# Developing Infrastructure Networks in Riyadh's Fourth Industrial City-RVSD#01-REV01-1 baseline modif

How a schedule from Primavera P6 changed from version to version. A marks actual dates.

## Version 1 (data date 2025-11-30, saved 2026-10-27, file RHD4-02-002-RVSD01_REV01-6-27-10.xer)

| ID | WBS | Task | Duration | Start | Finish | Predecessors |
| --- | --- | --- | --- | --- | --- | --- |
|  | 19 | **RHD4-02-002-Authorities Permits & Approval - AT** |  | 2025-11-30 | 2026-01-08 |  |
| RHD4GNPERMITAT1000 |  | Electrical Network Authorities Permits & Approval - AT | 10d | 2025-11-30 | 2025-12-11 | RHD4GNPSMIS1000 SS |
| RHD4GNPERMITENV3000 |  | Enviromental Permits & Aproval - ENV | 30d | 2025-11-30 | 2026-01-08 | RHD4GNPSMIS1000 SS |
| RHD4GNPERMITAT2000 |  | Telecommunication System Authorities Permits & Approval - AT | 10d | 2025-12-14 | 2025-12-25 | RHD4GNPSMIS1000 SS, RHD4GNPERMITAT1000 |
|  | 3 | **RHD4-02-002-Milestones - MIS** |  | 2025-11-30 | 2028-05-30 |  |
|  | 4 | **RHD4-02-002-Contractual Milestones** |  | 2025-11-30 | 2028-05-30 |  |
| RHD4GNPSMIS1000 |  | Project Start - MIS | 0d | 2025-11-30 | 2025-11-30 |  |
| RHD4GNMRDMIS1200 |  | Submittal and Approval of Project Management Plan - MIS | 0d | 2025-12-29 | 2025-12-29 | RHD4GNPPPMP1100 FF, RHD4GNPPBL1100 FF, RHD4GNPPHSE1100 FF, RHD4GNPPLOG1100 FF, RHD4GNPPORG1100 FF |
| RHD4GNMOBMIS1100 |  | Mobilization Finish - MIS | 0d | 2026-01-03 | 2026-01-03 | RHD4GNMOB1300 FF, RHD4GNMOB1100 FF, RHD4GNMOB1500 FF, RHD4GNMOB1400 FF |
| RHD4GNENMIS1300 |  | Submittal and Approval of Shop Drawings and Material Approvals - MIS | 0d | 2026-01-28 | 2026-01-28 | RHD4ENSDZ1APPEW100 FF, RHD4ENSDZ1APPST110 FF, RHD4ENSDZ1APPSW120 FF, RHD4ENSDZ1APPPT130 FF, RHD4ENSDZ1APPIRR140 FF, RHD4ENSDZ1APPMV150 FF, RHD4ENSDZ1APPRD220 FF, RHD4ENSDZ1APPLV160 FF, RHD4ENSDZ1APPSL170 FF, RHD4ENSDZ1APPTC190 FF, RHD4ENSDZ1APPICT200 FF, RHD4ENSDZ1APPCCTV210 FF, RHD4ENSDZ2APPEW100 FF, RHD4ENSDZ2APPST110 FF, RHD4ENSDZ2APPSW120 FF, RHD4ENSDZ2APPPT130 FF, RHD4ENSDZ2APPIRR140 FF, RHD4ENSDZ2APPMV150 FF, RHD4ENSDZ2APPRD220 FF, RHD4ENSDZ2APPLV160 FF, RHD4ENSDZ2APPSL170 FF, RHD4ENSDZ2APPTC190 FF, RHD4ENSDZ2APPICT200 FF, RHD4ENSDZ2APPCCTV210 FF, RHD4ENSDZ3APPEW100 FF, RHD4ENSDZ3APPST110 FF, RHD4ENSDZ3APPSW120 FF, RHD4ENSDZ3APPPT130 FF, RHD4ENSDZ3APPIRR140 FF, RHD4ENSDZ3APPMV150 FF, RHD4ENSDZ3APPRD220 FF, RHD4ENSDZ3APPLV160 FF, RHD4ENSDZ3APPSL170 FF, RHD4ENSDZ3APPTC190 FF, RHD4ENSDZ3APPICT200 FF, RHD4ENSDZ3APPCCTV210 FF, RHD4ENSDZ4APPEW100 FF, RHD4ENSDZ4APPST110 FF, RHD4ENSDZ4APPSW120 FF, RHD4ENSDZ4APPPT130 FF, RHD4ENSDZ4APPIRR140 FF, RHD4ENSDZ4APPMV150 FF, RHD4ENSDZ4APPRD220 FF, RHD4ENSDZ4APPLV160 FF, RHD4ENSDZ4APPSL170 FF, RHD4ENSDZ4APPTC190 FF, RHD4ENSDZ4APPICT200 FF, RHD4ENSDZ4APPCCTV210 FF, RHD4ENSDZ5APPEW100 FF, RHD4ENSDZ5APPST110 FF, RHD4ENSDZ5APPSW120 FF, RHD4ENSDZ5APPPT130 FF, RHD4ENSDZ5APPIRR140 FF, RHD4ENSDZ5APPMV150 FF, RHD4ENSDZ5APPRD220 FF, RHD4ENSDZ5APPLV160 FF, RHD4ENSDZ5APPSL170 FF, RHD4ENSDZ5APPTC190 FF, RHD4ENSDZ5APPICT200 FF, RHD4ENSDZ5APPCCTV210 FF, RHD4ENSDZ6APPEW100 FF, RHD4ENSDZ6APPST110 FF, RHD4ENSDZ6APPSW120 FF, RHD4ENSDZ6APPPT130 FF, RHD4ENSDZ6APPIRR140 FF, RHD4ENSDZ6APPMV150 FF, RHD4ENSDZ6APPRD220 FF, RHD4ENSDZ6APPLV160 FF, RHD4ENSDZ6APPSL170 FF, RHD4ENSDZ6APPTC190 FF, RHD4ENSDZ6APPICT200 FF, RHD4ENSDZ6APPCCTV210 FF, RHD4ENSDZ7APPEW100 FF, RHD4ENSDZ7APPST110 FF, RHD4ENSDZ7APPSW120 FF, RHD4ENSDZ7APPPT130 FF, RHD4ENSDZ7APPIRR140 FF, RHD4ENSDZ7APPMV150 FF, RHD4ENSDZ7APPRD220 FF, RHD4ENSDZ7APPLV160 FF, RHD4ENSDZ7APPSL170 FF, RHD4ENSDZ7APPTC190 FF, RHD4ENSDZ7APPICT200 FF, RHD4ENSDZ7APPCCTV210 FF, RHD4ENSDZ8APPEW100 FF, RHD4ENSDZ8APPST110 FF, RHD4ENSDZ8APPSW120 FF, RHD4ENSDZ8APPPT130 FF, RHD4ENSDZ8APPIRR140 FF, RHD4ENSDZ8APPMV150 FF, RHD4ENSDZ8APPRD220 FF, RHD4ENSDZ8APPLV160 FF, RHD4ENSDZ8APPSL170 FF, RHD4ENSDZ8APPTC190 FF, RHD4ENSDZ8APPICT200 FF, RHD4ENSDZ8APPCCTV210 FF, RHD4ENSDZ9APPEW100 FF, RHD4ENSDZ9APPST110 FF, RHD4ENSDZ9APPSW120 FF, RHD4ENSDZ9APPPT130 FF, RHD4ENSDZ9APPIRR140 FF, RHD4ENSDZ9APPMV150 FF, RHD4ENSDZ9APPRD220 FF, RHD4ENSDZ9APPLV160 FF, RHD4ENSDZ9APPSL170 FF, RHD4ENSDZ9APPTC190 FF, RHD4ENSDZ9APPICT200 FF, RHD4ENSDZ9APPCCTV210 FF, RHD4ENTUN1APPSTC1000 FF, RHD4ENSWL1APPSTC1000 FF, RHD4ENSWL1APPELE1300 FF, RHD4ENSTL1APPSTC1000 FF, RHD4ENSTL1APPELE1300 FF, RHD4ENMSEW2000 FF, RHD4ENMSTUN2000 FF, RHD4ENMSASPH2000 FF, RHD4ENMSST2000 FF, RHD4ENMSSW2000 FF, RHD4ENMSPT2000 FF, RHD4ENMSRR2000 FF, RHD4ENMSMV2000 FF, RHD4ENMSLV2000 FF, RHD4ENMSSL2000 FF, RHD4ENMSER2000 FF, RHD4ENMSRD2000 FF, RHD4ENMSBC2000 FF, RHD4ENMSTUN2010 FF, RHD4ENMSASPH2010 FF, RHD4ENMSST2010 FF, RHD4ENMSSW2010 FF, RHD4ENMSPT2010 FF, RHD4ENMSRR2010 FF, RHD4ENMSMV2010 FF, RHD4ENMSLV2010 FF, RHD4ENMSSL2010 FF, RHD4ENMSER2010 FF, RHD4ENMSRD2010 FF, RHD4ENMSBC2010 FF, RHD4ENMARAPPEW100 FF, RHD4ENMARSUBEW100 FF, RHD4ENMARSUBST100 FF, RHD4ENMARSUBST200 FF, RHD4ENMARSUBST400 FF, RHD4ENMARSUBST300 FF, RHD4ENMARSUBST500 FF, RHD4ENMARSUBST600 FF, RHD4ENMARSUBST700 FF, RHD4ENMARSUBST800 FF, RHD4ENMARSUBSW200 FF, RHD4ENMARSUBSW100 FF, RHD4ENMARSUBSW300 FF, RHD4ENMARSUBSW400 FF, RHD4ENMARSUBSW500 FF, RHD4ENMARSUBSW600 FF, RHD4ENMARSUBPT100 FF, RHD4ENMARSUBPT200 FF, RHD4ENMARSUBPT500 FF, RHD4ENMARSUBPT300 FF, RHD4ENMARSUBPT400 FF, RHD4ENMARSUBIRR100 FF, RHD4ENMARSUBIRR200 FF, RHD4ENMARSUBIRR400 FF, RHD4ENMARSUBIRR300 FF, RHD4ENMARSUBMV100 FF, RHD4ENMARSUBMV600 FF, RHD4ENMARSUBMV700 FF, RHD4ENMARSUBMV200 FF, RHD4ENMARSUBMV300 FF, RHD4ENMARSUBMV400 FF, RHD4ENMARSUBMV500 FF, RHD4ENMARSUBLV100 FF, RHD4ENMARSUBLV500 FF, RHD4ENMARSUBLV200 FF, RHD4ENMARSUBLV300 FF, RHD4ENMARSUBLV400 FF, RHD4ENMARSUBLV600 FF, RHD4ENMARSUBSL100 FF, RHD4ENMARSUBSL500 FF, RHD4ENMARSUBSL300 FF, RHD4ENMARSUBSL200 FF, RHD4ENMARSUBSL400 FF, RHD4ENMARSUBTC100 FF, RHD4ENMARSUBTC200 FF, RHD4ENMARSUBTC300 FF, RHD4ENMARSUBICT100 FF, RHD4ENMARSUBICT200 FF, RHD4ENMARSUBICT300 FF, RHD4ENMARSUBCCTV100 FF, RHD4ENMARSUBCCTV300 FF, RHD4ENMARSUBCCTV400 FF, RHD4ENMARSUBCCTV200 FF, RHD4ENMARSUBCCTV500 FF, RHD4ENMARSUBRD100 FF, RHD4ENMARSUBRD200 FF, RHD4ENMARSUBRD300 FF, RHD4ENMARSUBRD700 FF, RHD4ENMARSUBRD400 FF, RHD4ENMARSUBRD500 FF, RHD4ENMARSUBRD600 FF, RHD4ENMARSUBLFS200 FF, RHD4ENMARSUBLFS2000 FF, RHD4ENMARSUBLFS300 FF, RHD4ENMARSUBLFS900 FF, RHD4ENMARSUBLFS2300 FF, RHD4ENMARSUBLFS2400 FF, RHD4ENMARSUBLFS400 FF, RHD4ENMARSUBLFS1000 FF, RHD4ENMARSUBLFS2100 FF, RHD4ENMARSUBLFS100 FF, RHD4ENMARSUBLFS1200 FF, RHD4ENMARSUBLFS2500 FF, RHD4ENMARSUBLFS500 FF, RHD4ENMARSUBLFS1300 FF, RHD4ENMARSUBLFS600 FF, RHD4ENMARSUBLFS1400 FF, RHD4ENMARSUBLFS1500 FF, RHD4ENMARSUBLFS2900 FF, RHD4ENMARSUBLFS700 FF, RHD4ENMARSUBLFS1600 FF, RHD4ENMARSUBLFS1700 FF, RHD4ENMARSUBLFS2600 FF, RHD4ENMARSUBLFS1900 FF, RHD4ENMARSUBLFS2700 FF, RHD4ENMARSUBLFS1800 FF, RHD4ENMARSUBLFS2200 FF, RHD4ENMARAPPST100 FF, RHD4ENMARAPPST200 FF, RHD4ENMARAPPST400 FF, RHD4ENMARAPPST300 FF, RHD4ENMARAPPST500 FF, RHD4ENMARAPPST600 FF, RHD4ENMARAPPST700 FF, RHD4ENMARAPPST800 FF, RHD4ENMARAPPPT100 FF, RHD4ENMARAPPPT200 FF, RHD4ENMARAPPPT500 FF, RHD4ENMARAPPPT300 FF, RHD4ENMARAPPPT400 FF, RHD4ENMARAPPPT600 FF, RHD4ENMARAPPIRR100 FF, RHD4ENMARAPPIRR200 FF, RHD4ENMARAPPIRR400 FF, RHD4ENMARAPPIRR300 FF, RHD4ENMARAPPIRR500 FF, RHD4ENMARAPPMV100 FF, RHD4ENMARAPPMV600 FF, RHD4ENMARAPPMV700 FF, RHD4ENMARAPPMV200 FF, RHD4ENMARAPPMV300 FF, RHD4ENMARAPPMV400 FF, RHD4ENMARAPPMV500 FF, RHD4ENMARAPPLV100 FF, RHD4ENMARAPPLV500 FF, RHD4ENMARAPPLV200 FF, RHD4ENMARAPPLV300 FF, RHD4ENMARAPPLV400 FF, RHD4ENMARAPPLV600 FF, RHD4ENMARAPPSL100 FF, RHD4ENMARAPPSL500 FF, RHD4ENMARAPPSL300 FF, RHD4ENMARAPPSL200 FF, RHD4ENMARAPPSL400 FF, RHD4ENMARAPPTC100 FF, RHD4ENMARAPPTC200 FF, RHD4ENMARAPPTC300 FF, RHD4ENMARAPPICT100 FF, RHD4ENMARAPPICT200 FF, RHD4ENMARAPPICT300 FF, RHD4ENMARAPPCCTV100 FF, RHD4ENMARAPPCCTV300 FF, RHD4ENMARAPPCCTV400 FF, RHD4ENMARAPPCCTV200 FF, RHD4ENMARAPPCCTV500 FF, RHD4ENMARAPPRD100 FF, RHD4ENMARAPPRD200 FF, RHD4ENMARAPPRD300 FF, RHD4ENMARAPPRD700 FF, RHD4ENMARAPPRD400 FF, RHD4ENMARAPPRD500 FF, RHD4ENMARAPPRD600 FF, RHD4ENMARAPPLFS200 FF, RHD4ENMARAPPLFS800 FF, RHD4ENMARAPPLFS2000 FF, RHD4ENMARAPPLFS3000 FF, RHD4ENMARAPPLFS300 FF, RHD4ENMARAPPLFS900 FF, RHD4ENMARAPPLFS2300 FF, RHD4ENMARAPPLFS2400 FF, RHD4ENMARAPPLFS400 FF, RHD4ENMARAPPLFS1000 FF, RHD4ENMARAPPLFS1100 FF, RHD4ENMARAPPLFS2100 FF, RHD4ENMARAPPLFS100 FF, RHD4ENMARAPPLFS1200 FF, RHD4ENMARAPPLFS2500 FF, RHD4ENMARAPPLFS500 FF, RHD4ENMARAPPLFS1300 FF, RHD4ENMARAPPLFS2800_R FF, RHD4ENMARAPPLFS600 FF, RHD4ENMARAPPLFS700 FF, RHD4ENMARAPPLFS1400 FF, RHD4ENMARAPPLFS1500 FF, RHD4ENMARAPPLFS1600 FF, RHD4ENMARAPPLFS1700 FF, RHD4ENMARAPPLFS1900 FF, RHD4ENMARAPPLFS2600 FF, RHD4ENMARAPPLFS2700 FF, RHD4ENMARAPPLFS2900 FF, RHD4ENMARAPPLFS1800 FF, RHD4ENMARAPPLFS2200 FF, RHD4ENMARAPPSW200 FF, RHD4ENMARAPPSW100 FF, RHD4ENMARAPPSW300 FF, RHD4ENMARAPPSW400 FF, RHD4ENMARAPPSW500 FF, RHD4ENMARAPPSW600 FF, RHD4ENMARAPPTU100 FF, RHD4GNPPMAT1100 FF, RHD4ENMARSUBSL400, RHD4GNPPSD1100 FF, RHD4ENSDZ9SUBCCTV210, RHD4ENSDZ8SUBCCTV210, RHD4ENSDZ7SUBCCTV210, RHD4ENSDZ6SUBCCTV210, RHD4ENSDZ5SUBCCTV210, RHD4ENSDZ4SUBCCTV210, RHD4ENSDZ3SUBCCTV210, RHD4ENSDZ2SUBCCTV210, RHD4ENSDZ1SUBCCTV210, RHD4ENSDZ6SUBRD220 FF, RHD4ENMARSUBLFS800 FF, RHD4ENMARSUBLFS1100 FF, RHD4ENMARSUBIRR500 FF, RHD4ENMARSUBPT600 FF, RHD4ENSWL1APPARC1100 FF, RHD4ENSDSWL1SUB2000 FF, RHD4ENSDSTL1SUB2000 FF, RHD4ENSWL1APPMEC1200 FF, RHD4ENSDSWL1SUB3000 FF, RHD4ENSDSTL1SUB3000 FF, RHD4ENSTL1APPARC1100 FF, RHD4ENSTL1APPMEC1200 FF, RHD4ENTUN1APPSTC1200 FF, RHD4ENSDTUN1SUB1200 FF, RHD4ENTUN1APPSTC1100 FF, RHD4ENSDTUN1SUB1100 FF, RHD4ENMARSUBLFS2800 FF |
| RHD4GNPROMIS1400 |  | Completion of material Delivery - MIS - (PO Issuance) | 0d | 2026-02-28 | 2026-02-28 | RHD4PRSHLPOST1000 FF, RHD4PRSHLPOST1100 FF, RHD4PRSHLPOST1200 FF, RHD4PRSHLPOST1300 FF, RHD4PRSHLPOST1400 FF, RHD4PRSHLPOST1500 FF, RHD4PRSHLPOST1700 FF, RHD4PRSHLPOSW1000 FF, RHD4PRSHLPOSW1100 FF, RHD4PRSHLPOSW1200 FF, RHD4PRSHLPOSW1300 FF, RHD4PRSHLPOSW1400 FF, RHD4PRSHLPOPT1000 FF, RHD4PRSHLPOPT1100 FF, RHD4PRSHLPOPT1200 FF, RHD4PRSHLPOPT1300 FF, RHD4PRSHLPOPT1400 FF, RHD4PRSHLPOPT1500 FF, RHD4PRSHLPOIRR1000 FF, RHD4PRSHLPOIRR1100 FF, RHD4PRSHLPOIRR1200 FF, RHD4PRSHLPOIRR1300 FF, RHD4PRSHLPOIRR1400 FF, RHD4PRSHLPOMV1000 FF, RHD4PRSHLPOMV1100 FF, RHD4PRSHLPOMV1200 FF, RHD4PRSHLPOMV1300 FF, RHD4PRSHLPOMV1400 FF, RHD4PRLOLPOMV1500 FF, RHD4PRLOLPOMV1600 FF, RHD4PRSHLPOLV1000 FF, RHD4PRSHLPOLV1100 FF, RHD4PRSHLPOLV1200 FF, RHD4PRSHLPOLV1300 FF, RHD4PRSHLPOLV1400 FF, RHD4PRSHLPOLV1500 FF, RHD4PRSHLPOSL1000 FF, RHD4PRSHLPOSL1100 FF, RHD4PRSHLPOSL1200 FF, RHD4PRSHLPOSL1300 FF, RHD4PRSHLPOSL1400 FF, RHD4PRSHLPOTC1000 FF, RHD4PRSHLPOTC1100 FF, RHD4PRSHLPOTC1200 FF, RHD4PRSHLPOICT1000 FF, RHD4PRSHLPOICT1100 FF, RHD4PRSHLPOICT1200 FF, RHD4PRSHLPOCCTV1000 FF, RHD4PRSHLPOCCTV1100 FF, RHD4PRSHLPOCCTV1200 FF, RHD4PRSHLPOCCTV1300 FF, RHD4PRSHLPORD1000 FF, RHD4PRSHLPORD1100 FF, RHD4PRSHLPORD1200 FF, RHD4PRSHLPORD1300 FF, RHD4PRSHLPORD1400 FF, RHD4PRSHLPORD1500 FF, RHD4PRSHLPORD1600 FF, RHD4PRSHLPOLFS1000 FF, RHD4PRSHLPOLFS1100 FF, RHD4PRSHLPOLFS1200 FF, RHD4PRSHLPOLFS1300 FF, RHD4PRSHLPOLFS1400 FF, RHD4PRSHLPOLFS1500 FF, RHD4PRSHLPOLFS1600 FF, RHD4PRSHLPOLFS1700 FF, RHD4PRSHLPOLFS1800 FF, RHD4PRSHLPOLFS1900 FF, RHD4PRLOLPOLFS2000 FF, RHD4PRSHLPOLFS2100 FF, RHD4PRSHLPOLFS2200 FF, RHD4PRSHLPOLFS2300 FF, RHD4PRSHLPOLFS2400 FF, RHD4PRSHLPOLFS2500 FF, RHD4PRSHLPOLFS2600 FF, RHD4PRSHLPOLFS2700 FF, RHD4PRSHLPOLFS2800 FF, RHD4PRSHLPOLFS2900 FF, RHD4PRSHLPOLFS3000 FF, RHD4PRLOLPOCCTV1000 FF, RHD4PRLOLPOLFS1000 FF, RHD4PRLOLPOLFS1100 FF, RHD4PRLOLPOLFS1200 FF, RHD4PRLOLPOLFS1300 FF, RHD4PRLOLPOLFS1400 FF, RHD4PRLOLPOLFS1500 FF, RHD4PRLOLPOLFS1600 FF, RHD4PRLOLPOLFS1700 FF, RHD4PRSHLPOST1600 FF, RHD4PRSHLPOSL1300, RHD4GNPPMAT1100 FF, RHD4ENMARSUBSL400 FF |
| RHD4GN10MMIS1500 |  | Roads Finish Milestone - MIS | 0d | 2026-09-30 | 2026-09-30 | RHD4CZ4L09RD3100 FF, RHD4CZ4L09RD3100, RHD4CZ8A011RD3100 FF, RHD4CZ7RA03RD3100 FF, RHD4CZ8C014RD3100 FF, RHD4CZ8RA04RD3100 FF, RHD4CZ7L03RD3100 FF, RHD4CZ9L06RD3100 FF, RHD4CZ9C071RD3100 FF, RHD4CZ7L131RD3100 FF, RHD4CZ7C032RD3100 FF, RHD4CZ7C02RD3100 FF, RHD4CZ8L04RD3100 FF, RHD4CZ7RA05RD3100 FF, RHD4CZ3C083RD3100 FF, RHD4CZ7C013RD3100 FF, RHD4CZ7A012RD3100 FF, RHD4CZ3C011RD3100 FF, RHD4CZ9L02RD3100 FF, RHD4CZ2C082RD3100 FF, RHD4CZ7L015RD3100 FF, RHD4CZ2L011RD3100 FF, RHD4CZ9L05RD3100 FF, RHD4CZ2L102RD3100 FF, RHD4CZ1C081RD3100 FF, RHD4CZ3L122RD3100 FF, RHD4CZ4C012RD3100 FF, RHD4CZ1L101RD3100 FF, RHD4CZ4L014RD3100 FF, RHD4CZ5L07RD3100 FF, RHD4CZ5L016RD3100 FF, RHD4CZ5RA07RD3100 FF, RHD4CZ5A014RD3100 FF, RHD4CZ5C061RD3100 FF, RHD4CZ6RA01RD3100 FF, RHD4CZ6C062RD3100 FF, RHD4CZ4A013RD3100 FF, RHD4CZ4C031RD3100 FF, RHD4CZ4RA02RD3100 FF, RHD4CZ6A015RD3100 FF, RHD4CZ5L08RD3100 FF, RHD4CZ4L01RD3100 FF, RHD4CZ6A02RD3100 FF, RHD4CZ6C052RD3100 FF, RHD4CZ5C051RD3100 FF |
| RHD4GN10MMIS1510 |  | Medium Voltage Finish Milestone - MIS | 0d | 2027-04-29 | 2027-04-29 | RHD4CZ7L015MV3300 FF, RHD4CZ1L101MV3401 FF, RHD4CZ7L03MV2400 FF, RHD4CZ7L03MV3400 FF, RHD4CZ7C02MV2400 FF, RHD4CZ6C062MV2400 FF, RHD4CZ3L122MV2400 FF, RHD4CZ6C052MV2400 FF, RHD4CZ6C062MV2400, RHD4CZ6C062MV3400 FF, RHD4CZ6C052MV2400, RHD4CZ6C052MV3400 FF, RHD4CZ5C051MV2400 FF, RHD4CZ5RA07MV3400 FF, RHD4CZ5C061MV2400 FF, RHD4CZ5C061MV3400 FF, RHD4CZ5L08MV2400 FF, RHD4CZ5L08MV3400 FF, RHD4CZ5A014MV2400 FF, RHD4CZ5A014MV3400 FF, RHD4CZ5L07MV2400 FF, RHD4CZ4L01MV2400 FF, RHD4CZ4A013MV2400 FF, RHD4CZ4C031MV2400 FF, RHD4CZ4L014MV2400 FF, RHD4CZ4L014MV3400 FF, RHD4CZ4L09MV3400 FF, RHD4CZ8A011MV2400 FF, RHD4CZ8A011MV3400 FF, RHD4CZ8RA04MV3400 FF, RHD4CZ8C014MV3400 FF, RHD4CZ9C071MV2400 FF, RHD4CZ9L05MV2400 FF, RHD4CZ9L06MV2400 FF, RHD4CZ9L06MV3400 FF, RHD4CZ9L02MV2400 FF, RHD4CZ9L02MV3400 FF, RHD4CZ7C032MV2400 FF, RHD4CZ7L03MV2400, RHD4CZ7L03MV3400, RHD4CZ7L131MV3400 FF, RHD4CZ7L015MV2400 FF, RHD4CZ7A012MV2400 FF, RHD4CZ7C02MV2400, RHD4CZ7C02MV3400 FF, RHD4CZ2L102MV3400 FF, RHD4CZ2L011MV2400 FF, RHD4CZ1C081MV3400 FF, RHD4CZ3C011MV2400 FF, RHD4CZ3C011MV3400 FF, RHD4CZ3L122MV2400, RHD4CZ3L122MV3400 FF, RHD4CZ5L07MV3401 FF, RHD4CZ4A013MV3401 FF, RHD4CZ4L09MV5400 FF, RHD4CZ1C081MV4200 FF |
| RHD4GN18MMIS1600 |  | Deep Network Finish Milestone - MIS | 0d | 2027-05-26 | 2027-05-26 | RHD4CZ7L015IRR2402 FF, RHD4CZ7L015IRR3203 FF, RHD4CZ7A012IRR1503 FF, RHD4CZ1L101IRR1504 FF, RHD4CZ1L101IRR3200 FF, RHD4CZ1C081IRR1504 FF, RHD4CZ1C081IRR3200 FF, RHD4CZ3C011IRR2402 FF, RHD4CZ3C011IRR3203 FF, RHD4CZ3L122IRR1500 FF, RHD4CZ3L122IRR1504 FF, RHD4CZ3L122IRR3200 FF, RHD4CZ3L122IRR2401 FF, RHD4CZ3L122IRR3202 FF, RHD4CZ3C083IRR1504 FF, RHD4CZ9C071PT1501 FF, RHD4CZ9C071PT1502 FF, RHD4CZ9L05PT1501 FF, RHD4CZ9L06PT1500 FF, RHD4CZ9L06PT1501 FF, RHD4CZ9L02PT1500 FF, RHD4CZ9L02PT1501 FF, RHD4CZ2L102PT1500 FF, RHD4CZ2L102PT1501 FF, RHD4CZ2L011PT1501 FF, RHD4CZ2C082PT1502 FF, RHD4CZ7C032PT1502 FF, RHD4CZ7C032PT1501 FF, RHD4CZ7L03PT1500 FF, RHD4CZ7L03PT1501 FF, RHD4CZ7L131PT1500 FF, RHD4CZ7L131PT1501 FF, RHD4CZ7L015PT1500 FF, RHD4CZ7L015PT1501 FF, RHD4CZ7A012PT1503 FF, RHD4CZ7C02PT1501 FF, RHD4CZ1L101PT1501 FF, RHD4CZ1L101PT1500 FF, RHD4CZ1C081PT1502 FF, RHD4CZ3C011PT1503 FF, RHD4CZ3C011PT1504 FF, RHD4CZ3L122PT1503 FF, RHD4CZ3C083PT1503 FF, RHD4CZ6C062IRR1500 FF, RHD4CZ6A015IRR1500 FF, RHD4CZ6C052IRR1500 FF, RHD4CZ5C051IRR1500 FF, RHD4CZ5RA07IRR1502 FF, RHD4CZ5C061IRR1502 FF, RHD4CZ5L08IRR1500 FF, RHD4CZ5L08IRR1502 FF, RHD4CZ5L016IRR1502 FF, RHD4CZ5L016IRR1504 FF, RHD4CZ5A014IRR1503 FF, RHD4CZ5L07IRR1500 FF, RHD4CZ4A013IRR1503 FF, RHD4CZ4L014IRR1500 FF, RHD4CZ4L014IRR1503 FF, RHD4CZ4L09IRR1500 FF, RHD4CZ8L04IRR1500 FF, RHD4CZ9C071IRR1500 FF, RHD4CZ9C071IRR1507 FF, RHD4CZ9L05IRR1507 FF, RHD4CZ9L06IRR1500 FF, RHD4CZ9L02IRR1500 FF, RHD4CZ9L02IRR1507 FF, RHD4CZ2L102IRR1504 FF, RHD4CZ2C082IRR1504 FF, RHD4CZ7L03IRR1500 FF, RHD4CZ7L03IRR1504 FF, RHD4CZ7L131IRR1500 FF, RHD4CZ7C013IRR1504 FF, RHD4CZ7L015IRR1500 FF, RHD4CZ7C02IRR1500 FF, RHD4CZ7C02IRR1504 FF, RHD4CZ6A015PT3202 FF, RHD4CZ6C052PT3202 FF, RHD4CZ5RA07PT3202 FF, RHD4CZ5C061PT3202 FF, RHD4CZ5L016PT3202 FF, RHD4CZ5A014PT3202 FF, RHD4CZ5L07PT3202 FF, RHD4CZ4A013PT3202 FF, RHD4CZ4L014PT3202 FF, RHD4CZ8A011PT3202 FF, RHD4CZ9C071PT3202 FF, RHD4CZ2L102PT3202 FF, RHD4CZ2C082PT3202 FF, RHD4CZ7C032PT3202 FF, RHD4CZ7L03PT3202 FF, RHD4CZ7L015PT3202 FF, RHD4CZ7C02PT3202 FF, RHD4CZ3C011PT3202 FF, RHD4CZ3L122PT3202 FF, RHD4CZ6A015PT4400 FF, RHD4CZ6C052PT4400 FF, RHD4CZ5L08PT4400 FF, RHD4CZ5L016PT4400 FF, RHD4CZ5A014PT4400 FF, RHD4CZ5L07PT4400 FF, RHD4CZ4A013PT4400 FF, RHD4CZ4C031PT4400 FF, RHD4CZ4L014PT4400 FF, RHD4CZ4L09PT4400 FF, RHD4CZ8A011PT4400 FF, RHD4CZ4L01PT4400 FF, RHD4CZ8L04PT4400 FF, RHD4CZ9C071PT4400 FF, RHD4CZ9L05PT4400 FF, RHD4CZ9L06PT4400 FF, RHD4CZ9L02PT4400 FF, RHD4CZ2L102PT4400 FF, RHD4CZ2L011PT4400 FF, RHD4CZ2C082PT4400 FF, RHD4CZ7C032PT4400 FF, RHD4CZ7L03PT4400 FF, RHD4CZ7L131PT4400 FF, RHD4CZ7L015PT4400 FF, RHD4CZ7A012PT4400 FF, RHD4CZ1C081PT4400 FF, RHD4CZ3C011PT4400 FF, RHD4CZ3L122PT4400 FF, RHD4CZ3C083PT4400 FF, RHD4CZ6A015IRR3200 FF, RHD4CZ6C052PT3200 FF, RHD4CZ6C052IRR3200 FF, RHD4CZ5RA07PT3200 FF, RHD4CZ5C061PT3200 FF, RHD4CZ5L08PT3200 FF, RHD4CZ5L08IRR3200 FF, RHD4CZ5L016PT3200 FF, RHD4CZ5L07PT3200 FF, RHD4CZ5L07IRR3200 FF, RHD4CZ4L014PT3200 FF, RHD4CZ4L014IRR3200 FF, RHD4CZ4L09PT3200 FF, RHD4CZ4L09IRR3200 FF, RHD4CZ4L01PT3200 FF, RHD4CZ8L04PT3200 FF, RHD4CZ8L04IRR3200 FF, RHD4CZ9C071PT3200 FF, RHD4CZ9L05PT3200 FF, RHD4CZ9L06PT3200 FF, RHD4CZ9L06IRR3200 FF, RHD4CZ9L02PT3200 FF, RHD4CZ9L02IRR3200 FF, RHD4CZ2L102PT3200 FF, RHD4CZ2L102IRR3200 FF, RHD4CZ2L011PT3200 FF, RHD4CZ2C082PT3200 FF, RHD4CZ2C082IRR3200 FF, RHD4CZ7L03IRR3200 FF, RHD4CZ7L131PT3200 FF, RHD4CZ7L131IRR3200 FF, RHD4CZ7L015PT3200 FF, RHD4CZ7L015IRR3200 FF, RHD4CZ7C02PT3200 FF, RHD4CZ7C02IRR3200 FF, RHD4CZ1C081PT3200 FF, RHD4CZ5L08PT3203 FF, RHD4CZ5A014PT3203 FF, RHD4CZ5L07PT3203 FF, RHD4CZ4A013PT3203 FF, RHD4CZ4L014PT3203 FF, RHD4CZ4L09PT3203 FF, RHD4CZ9C071PT3203 FF, RHD4CZ9L05PT3203 FF, RHD4CZ9L06PT3203 FF, RHD4CZ9L02PT3203 FF, RHD4CZ2L102PT3203 FF, RHD4CZ2L011PT3203 FF, RHD4CZ2C082PT3203 FF, RHD4CZ7L131PT3203 FF, RHD4CZ7C02PT3203 FF, RHD4CZ1C081PT3203 FF, RHD4CZ3C011PT3203 FF, RHD4CZ3L122PT3203 FF, RHD4CZ3C083PT3203 FF, RHD4CZ6A015IRR3203 FF, RHD4CZ5RA07IRR3202 FF, RHD4CZ5L07PT3201 FF, RHD4CZ5L07IRR3202 FF, RHD4CZ4A013PT3201 FF, RHD4CZ4C031PT3201 FF, RHD4CZ4L09IRR3202 FF, RHD4CZ8A011PT3201 FF, RHD4CZ9L02IRR3202 FF, RHD4CZ9L02IRR3203 FF, RHD4CZ7L03IRR3201 FF, RHD4CZ7L03IRR3203 FF, RHD4CZ7L131IRR3203 FF, RHD4CZ7L015IRR3202 FF, RHD4CZ7A012PT3201 FF, RHD4CZ7C02IRR3201 FF, RHD4CZ3C011PT3201 FF, RHD4CZ6C062SW3400 FF, RHD4CZ6C052SW3400 FF, RHD4CZ5RA07SW3400 FF, RHD4CZ5C061SW3400 FF, RHD4CZ5C061SW3401 FF, RHD4CZ5L08SW3400 FF, RHD4CZ5L016SW3400 FF, RHD4CZ5L07SW3400 FF, RHD4CZ4L09SW3400 FF, RHD4CZ9L06SW3400 FF, RHD4CZ9L02SW3400 FF, RHD4CZ2L102SW3400 FF, RHD4CZ7L03SW3400 FF, RHD4CZ7L015SW3400 FF, RHD4CZ1L101SW3400 FF, RHD4CZ1C081SW3400 FF, RHD4CZ6C062SW3500 FF, RHD4CZ6C052SW3500 FF, RHD4CZ5RA07SW3500 FF, RHD4CZ5C061SW3500 FF, RHD4CZ5C061SW3501 FF, RHD4CZ5L08SW3500 FF, RHD4CZ5L016SW3500 FF, RHD4CZ5L07SW3500 FF, RHD4CZ4L09SW3500 FF, RHD4CZ9L06SW3500 FF, RHD4CZ9L02SW3500 FF, RHD4CZ2L102SW3500 FF, RHD4CZ7L03SW3500 FF, RHD4CZ7L015SW3500 FF, RHD4CZ1L101SW3500 FF, RHD4CZ1C081SW3500 FF, RHD4CZ7L03ST7500 FF, RHD4CZ7L03ST3502 FF, RHD4CZ7L03PT4500 FF, RHD4CZ1L101IRR3201 FF, RHD4CZ8L04ST3500 FF, RHD4CZ4C012IRR3201 FF, RHD4CZ6A015RW3000 FF, RHD4CZ5L016ST8500 FF, RHD4CZ5A014IRR3203 FF, RHD4CZ1C081TC3400 FF, RHD4CZ3L122ST1507 FF, RHD4CZ7L03SL2400 FF, RHD4CZ7C013IRR3203 FF, RHD4CZ7C013IRR3200 FF, RHD4CZ6C052PT3203 FF, RHD4CZ7C032SL2400 FF, RHD4CZ7C02LV2400 FF, RHD4CZ9L06SL2400 FF, RHD4CZ6C052IRR3202 FF, RHD4CZ9C071ST1502 FF, RHD4CZ9C071ST1501 FF, RHD4CZ9C071ST1500 FF, RHD4CZ5L08SL2400 FF, RHD4CZ5L08SW3000 FF, RHD4CZ5L08SW2500 FF, RHD4CZ5L08PT1501 FF, RHD4CZ4A013LV2400 FF, RHD4CZ1C081IRR3203 FF, RHD4CZ4L09PT3202 FF, RHD4CZ2C082PT2401 FF, RHD4CZ4L09PT2401 FF, RHD4CZ4A013ST2500 FF, RHD4CZ5C061SL2400 FF, RHD4CZ4L014IRR3203 FF, RHD4CZ5L08IRR3202 FF, RHD4CZ4A013ICT3400 FF, RHD4CZ9L02SW2500 FF, RHD4CZ9L05SL2400 FF, RHD4CZ5L016IRR3203 FF, RHD4CZ5L016IRR3201 FF, RHD4CZ4RA02CCTV1500 FF, RHD4CZ4C012IRR1504 FF, RHD4CZ9L02IRR2401 FF, RHD4CZ8C014IRR3200 FF, RHD4CZ8C014IRR1501 FF, RHD4CZ8A011IRR3200 FF, RHD4CZ8C014IRR3202 FF, RHD4CZ9C071SW3500 FF, RHD4CZ7C032IRR3202 FF, RHD4CZ9C071IRR3201 FF, RHD4CZ7A012SW3500 FF, RHD4CZ8L04LV2400 FF, RHD4CZ7C032IRR3203 FF, RHD4CZ8RA04SL2400 FF, RHD4CZ7C032IRR3200 FF, RHD4CZ8L04SL2400 FF, RHD4CZ3C011IRR3200 FF, RHD4CZ4L01CCTV1500 FF, RHD4CZ4L01RD8100 FF, RHD4CZ3L122SL2400 FF, RHD4CZ4L01CCTV6100 FF, RHD4CZ9B36EX1000 FF, RHD4CZ9C071SL2400 FF, RHD4CZ5C061ST3401 FF, RHD4CZ1C081ST3500 FF, RHD4CZ1C081ST3501 FF, RHD4CZ1L101ST3500 FF, RHD4CZ1L101ST3501 FF, RHD4CZ2C082ST3500 FF, RHD4CZ2C082ST3501 FF, RHD4CZ2L011ST3500 FF, RHD4CZ2L102ST3500 FF, RHD4CZ2L102ST3501 FF, RHD4CZ2L102ST3502 FF, RHD4CZ3C083ST3500 FF, RHD4CZ3L122ST3500 FF, RHD4CZ3L122ST3501 FF, RHD4CZ3L122ST3502 FF, RHD4CZ4A013ST3501 FF, RHD4CZ4A013ST3502 FF, RHD4CZ4C031ST3500 FF, RHD4CZ4C031ST3501 FF, RHD4CZ4L014ST3500 FF, RHD4CZ4L014ST3501 FF, RHD4CZ4L014ST3502 FF, RHD4CZ4L09ST3500 FF, RHD4CZ4L09ST3501 FF, RHD4CZ5A014ST3500 FF, RHD4CZ5A014ST3501 FF, RHD4CZ5A014ST3502 FF, RHD4CZ5C051ST3500 FF, RHD4CZ5C051ST3501 FF, RHD4CZ5C061ST3501 FF, RHD4CZ5L016ST3500 FF, RHD4CZ5L016ST3501 FF, RHD4CZ5L016ST3502 FF, RHD4CZ5L07ST3500 FF, RHD4CZ5L07ST3501 FF, RHD4CZ5L07ST3502 FF, RHD4CZ5L08ST3500 FF, RHD4CZ5L08ST3502 FF, RHD4CZ6A015ST3500 FF, RHD4CZ6A015ST3501 FF, RHD4CZ6A02ST3500 FF, RHD4CZ6C052ST3500 FF, RHD4CZ6C052ST3501 FF, RHD4CZ6C062ST3500 FF, RHD4CZ6C062ST3501 FF, RHD4CZ7C02ST3500 FF, RHD4CZ7C02ST3501 FF, RHD4CZ7C02ST3502 FF, RHD4CZ7L015ST3500 FF, RHD4CZ7L015ST3501 FF, RHD4CZ7L131ST3501 FF, RHD4CZ8A011ST3500 FF, RHD4CZ8A011ST3501 FF, RHD4CZ8L04ST3501 FF, RHD4CZ8L04ST3502 FF, RHD4CZ9C071ST3500 FF, RHD4CZ9C071ST3501 FF, RHD4CZ9C071ST3502 FF, RHD4CZ9L02ST3500 FF, RHD4CZ9L02ST3501 FF, RHD4CZ9L02ST3502 FF, RHD4CZ9L05ST3500 FF, RHD4CZ9L06ST3500 FF, RHD4CZ9L06ST3501 FF, RHD4CZ9L06ST3502 FF, RHD4CZ1C081ST7500 FF, RHD4CZ1L101ST7500 FF, RHD4CZ2C082ST7500 FF, RHD4CZ2L011ST7500 FF, RHD4CZ2L102ST7500 FF, RHD4CZ3C083ST7500 FF, RHD4CZ3L122ST7500 FF, RHD4CZ4A013ST7500 FF, RHD4CZ4C031ST7500 FF, RHD4CZ4L014ST7500 FF, RHD4CZ4L09ST7500 FF, RHD4CZ5A014ST7500 FF, RHD4CZ5C051ST7500 FF, RHD4CZ5C061ST7500 FF, RHD4CZ5L016ST7500 FF, RHD4CZ5L07ST7500 FF, RHD4CZ5L08ST7500 FF, RHD4CZ6A015ST7500 FF, RHD4CZ6A02ST7500 FF, RHD4CZ6C052ST7500 FF, RHD4CZ6C062ST7500 FF, RHD4CZ7A012ST7500 FF, RHD4CZ7C02ST7500 FF, RHD4CZ7L015ST7500 FF, RHD4CZ7L03ST7500, RHD4CZ7L131ST7500 FF, RHD4CZ8A011ST7500 FF, RHD4CZ8L04ST7500 FF, RHD4CZ9C071ST7500 FF, RHD4CZ9L02ST7500 FF, RHD4CZ9L05ST7500 FF, RHD4CZ9L06ST7500 FF, RHD4CZ1C081ST8500 FF, RHD4CZ2C082ST8500 FF, RHD4CZ2L102ST8500 FF, RHD4CZ3L122ST8500 FF, RHD4CZ4A013ST8500 FF, RHD4CZ4L014ST8500 FF, RHD4CZ5A014ST8500 FF, RHD4CZ5L07ST8500 FF, RHD4CZ6C052ST8500 FF, RHD4CZ6C062ST8500 FF, RHD4CZ7A012ST8500 FF, RHD4CZ7C02ST8500 FF, RHD4CZ7L015PT4500 FF, RHD4CZ6C052PT4500 FF, RHD4CZ5A014PT4500 FF, RHD4CZ5C051IRR3202 FF, RHD4CZ5C051IRR3203 FF, RHD4CZ5C051IRR3202, RHD4CZ5L016PT4500 FF, RHD4CZ5L08PT4500 FF, RHD4CZ5RA07IRR3200 FF, RHD4CZ5L07PT4500 FF, RHD4CZ5C051PT3200 FF, RHD4CZ5C051IRR3200 FF, RHD4CZ8A011PT4500 FF, RHD4CZ4L01PT4500 FF, RHD4CZ8L04PT4500 FF, RHD4CZ9C071PT4500 FF, RHD4CZ9L05PT4500 FF, RHD4CZ9L06PT4500 FF, RHD4CZ7A012PT4500 FF, RHD4CZ4C031PT4500 FF, RHD4CZ4L014PT4500 FF, RHD4CZ4L09PT4500 FF, RHD4CZ3L122PT4500 FF, RHD4CZ1C081PT4500 FF, RHD4CZ2C082PT4500 FF, RHD4CZ2L102PT4500 FF, RHD4CZ2L011PT4500 FF, RHD4CZ5L08ST4600 FF, RHD4CZ2L102ST4600 FF, RHD4CZ9L05SW3500 FF, RHD4PRSHLDOSIRR1300 FF, RHD4PRSHLSTAGIRR1300 FF, RHD4PRSHLDOSIRR1100 FF, RHD4PRSHLSTAGIRR1100 FF, RHD4PRSHLDOSIRR1200 FF, RHD4PRSHLDOSIRR1400 FF, RHD4PRSHLSTAGIRR1200 FF, RHD4PRSHLSTAGIRR1400 FF, RHD4ENSDZ9APPIRR140 FF, RHD4CZ9L06IRR1100 FF, RHD4PRSHLDOSSW1408 FF, RHD4PRSHLSTAGSW1408 FF, RHD4PRSHLDOSSW1308 FF, RHD4PRSHLSTAGSW1308 FF, RHD4CZ9L06SW3501 FF, RHD4CZ5A014SW3500 FF, RHD4CZ5A014IRR3200 FF |
| RHD4GN24MMIS1700 |  | All Network Finish Milestone - MIS | 0d | 2027-11-25 | 2027-11-25 | RHD4CZ6C062MV1200 FF, RHD4CZ6C052MV1200 FF, RHD4CZ5C051MV1200 FF, RHD4CZ5RA07MV1200 FF, RHD4CZ5C061MV1200 FF, RHD4CZ5L08MV1200 FF, RHD4CZ5L016MV1200 FF, RHD4CZ5A014MV1200 FF, RHD4CZ5L07MV1200 FF, RHD4CZ4A013MV1200 FF, RHD4CZ4C031MV1200 FF, RHD4CZ4L014MV1200 FF, RHD4CZ4L09MV1200 FF, RHD4CZ4C012MV1200 FF, RHD4CZ8A011MV1200 FF, RHD4CZ4L01MV1200 FF, RHD4CZ8L04MV1200 FF, RHD4CZ8C014MV1200 FF, RHD4CZ9C071MV1200 FF, RHD4CZ9L06MV1200 FF, RHD4CZ9L02MV1200 FF, RHD4CZ2L102MV1200 FF, RHD4CZ2L011MV1200 FF, RHD4CZ7C032MV1200 FF, RHD4CZ7L03MV1200 FF, RHD4CZ7L131MV1200 FF, RHD4CZ7C013MV1200 FF, RHD4CZ7L015MV1200 FF, RHD4CZ7A012MV1200 FF, RHD4CZ7C02MV1200 FF, RHD4CZ1L101MV1200 FF, RHD4CZ1C081MV1200 FF, RHD4CZ3C011MV1200 FF, RHD4CZ3L122MV1200 FF, RHD4CZ6C062MV3300 FF, RHD4CZ6C062LV3300 FF, RHD4CZ6C062LV3400 FF, RHD4CZ6C062SL3300 FF, RHD4CZ6C062SL3400 FF, RHD4CZ6A015LV3300 FF, RHD4CZ6A015LV3400 FF, RHD4CZ6A015SL3300 FF, RHD4CZ6A015SL3400 FF, RHD4CZ6C052MV3300 FF, RHD4CZ6C052LV3300 FF, RHD4CZ6C052LV3400 FF, RHD4CZ6C052SL3300 FF, RHD4CZ6C052SL3400 FF, RHD4CZ6A02LV3300 FF, RHD4CZ6A02LV3400 FF, RHD4CZ6A02SL3300 FF, RHD4CZ6A02SL3400 FF, RHD4CZ6RA01SL3300 FF, RHD4CZ6RA01SL3400 FF, RHD4CZ5C051MV3300 FF, RHD4CZ5C051LV3300 FF, RHD4CZ5C051LV3400 FF, RHD4CZ5C051SL3300 FF, RHD4CZ5C051SL3400 FF, RHD4CZ5RA07MV3300 FF, RHD4CZ5RA07MV3301 FF, RHD4CZ5RA07LV3300 FF, RHD4CZ5RA07LV3400 FF, RHD4CZ5RA07SL3300 FF, RHD4CZ5RA07SL3400 FF, RHD4CZ5C061MV3300 FF, RHD4CZ5C061MV3301 FF, RHD4CZ5C061LV3300 FF, RHD4CZ5C061LV3400 FF, RHD4CZ5C061SL3300 FF, RHD4CZ5C061SL3400 FF, RHD4CZ5L08MV3300 FF, RHD4CZ5L08LV3300 FF, RHD4CZ5L08LV3400 FF, RHD4CZ5L08SL3300 FF, RHD4CZ5L08SL3400 FF, RHD4CZ5L016MV3300 FF, RHD4CZ5L016LV3300 FF, RHD4CZ5L016LV3400 FF, RHD4CZ5L016SL3300 FF, RHD4CZ5L016SL3400 FF, RHD4CZ5A014MV3300 FF, RHD4CZ5A014SL3300 FF, RHD4CZ5A014SL3400 FF, RHD4CZ5L07MV3300 FF, RHD4CZ5L07LV3300 FF, RHD4CZ5L07LV3400 FF, RHD4CZ5L07SL3300 FF, RHD4CZ5L07SL3400 FF, RHD4CZ4A013MV3300 FF, RHD4CZ4A013SL3300 FF, RHD4CZ4A013SL3400 FF, RHD4CZ4RA02SL3300 FF, RHD4CZ4RA02SL3400 FF, RHD4CZ4C031MV3300 FF, RHD4CZ4C031LV3300 FF, RHD4CZ4C031LV3400 FF, RHD4CZ4C031SL3300 FF, RHD4CZ4C031SL3400 FF, RHD4CZ4L014MV3300 FF, RHD4CZ4L014MV3301 FF, RHD4CZ4L014LV3300 FF, RHD4CZ4L014LV3400 FF, RHD4CZ4L014SL3300 FF, RHD4CZ4L014SL3400 FF, RHD4CZ4L09MV3300 FF, RHD4CZ4L09MV3301 FF, RHD4CZ4L09LV3300 FF, RHD4CZ4L09LV3400 FF, RHD4CZ4L09SL3300 FF, RHD4CZ4L09SL3400 FF, RHD4CZ4C012MV3300 FF, RHD4CZ4C012LV3300 FF, RHD4CZ4C012LV3400 FF, RHD4CZ4C012SL3300 FF, RHD4CZ4C012SL3400 FF, RHD4CZ8A011MV3300 FF, RHD4CZ8A011MV3301 FF, RHD4CZ8A011LV3300 FF, RHD4CZ8A011LV3400 FF, RHD4CZ8A011SL3300 FF, RHD4CZ8A011SL3400 FF, RHD4CZ8RA04MV3301 FF, RHD4CZ8RA04LV3300 FF, RHD4CZ8RA04LV3400 FF, RHD4CZ8RA04SL3300 FF, RHD4CZ8RA04SL3400 FF, RHD4CZ4L01MV3300 FF, RHD4CZ4L01LV3300 FF, RHD4CZ4L01LV3400 FF, RHD4CZ4L01SL3300 FF, RHD4CZ4L01SL3400 FF, RHD4CZ8L04MV3300 FF, RHD4CZ8L04SL3300 FF, RHD4CZ8L04SL3400 FF, RHD4CZ8C014MV3300 FF, RHD4CZ8C014MV3301 FF, RHD4CZ8C014LV3300 FF, RHD4CZ8C014LV3400 FF, RHD4CZ8C014SL3300 FF, RHD4CZ8C014SL3400 FF, RHD4CZ9C071MV3300 FF, RHD4CZ9C071LV3300 FF, RHD4CZ9C071LV3400 FF, RHD4CZ9C071SL3300 FF, RHD4CZ9C071SL3400 FF, RHD4CZ9L05MV3300 FF, RHD4CZ9L05LV3300 FF, RHD4CZ9L05LV3400 FF, RHD4CZ9L05SL3300 FF, RHD4CZ9L05SL3400 FF, RHD4CZ9L06MV3300 FF, RHD4CZ9L06LV3300 FF, RHD4CZ9L06LV3400 FF, RHD4CZ9L06SL3300 FF, RHD4CZ9L06SL3400 FF, RHD4CZ9L02MV3300 FF, RHD4CZ9L02MV3301 FF, RHD4CZ9L02LV3300 FF, RHD4CZ9L02LV3400 FF, RHD4CZ9L02SL3300 FF, RHD4CZ9L02SL3400 FF, RHD4CZ2L102MV3300 FF, RHD4CZ2L102SL3300 FF, RHD4CZ2L102SL3400 FF, RHD4CZ2L011MV3300 FF, RHD4CZ2L011LV3300 FF, RHD4CZ2L011LV3400 FF, RHD4CZ2L011SL3300 FF, RHD4CZ2L011SL3400 FF, RHD4CZ2C082SL3300 FF, RHD4CZ2C082SL3400 FF, RHD4CZ7C032MV3300 FF, RHD4CZ7C032LV3300 FF, RHD4CZ7C032LV3400 FF, RHD4CZ7C032SL3300 FF, RHD4CZ7C032SL3400 FF, RHD4CZ7L03MV3300 FF, RHD4CZ7L03MV3301 FF, RHD4CZ7L03LV3300 FF, RHD4CZ7L03LV3400 FF, RHD4CZ7L03SL3300 FF, RHD4CZ7L03SL3400 FF, RHD4CZ7L131MV3300 FF, RHD4CZ7L131LV3300 FF, RHD4CZ7L131LV3400 FF, RHD4CZ7L131SL3300 FF, RHD4CZ7L131SL3400 FF, RHD4CZ7C013MV3300 FF, RHD4CZ7C013SL3300 FF, RHD4CZ7C013SL3400 FF, RHD4CZ7L015MV3300 FF, RHD4CZ7L015SL3300 FF, RHD4CZ7L015SL3400 FF, RHD4CZ7A012MV3300 FF, RHD4CZ7A012LV3300 FF, RHD4CZ7A012LV3400 FF, RHD4CZ7A012SL3300 FF, RHD4CZ7A012SL3400 FF, RHD4CZ7C02MV3300 FF, RHD4CZ7C02LV3300 FF, RHD4CZ7C02LV3400 FF, RHD4CZ7C02SL3300 FF, RHD4CZ7C02SL3400 FF, RHD4CZ7RA03MV3301 FF, RHD4CZ7RA03LV3300 FF, RHD4CZ7RA03LV3400 FF, RHD4CZ7RA03SL3300 FF, RHD4CZ7RA03SL3400 FF, RHD4CZ7RA05SL3300 FF, RHD4CZ7RA05SL3400 FF, RHD4CZ1L101MV3300 FF, RHD4CZ1L101LV3300 FF, RHD4CZ1L101LV3400 FF, RHD4CZ1L101SL3300 FF, RHD4CZ1L101SL3400 FF, RHD4CZ1C081MV3300 FF, RHD4CZ1C081LV3300 FF, RHD4CZ1C081LV3400 FF, RHD4CZ1C081SL3300 FF, RHD4CZ1C081SL3400 FF, RHD4CZ3C011MV3300 FF, RHD4CZ3C011MV3301 FF, RHD4CZ3C011LV3300 FF, RHD4CZ3C011LV3400 FF, RHD4CZ3C011SL3300 FF, RHD4CZ3C011SL3400 FF, RHD4CZ3L122MV3300 FF, RHD4CZ3L122MV3301 FF, RHD4CZ3L122LV3300 FF, RHD4CZ3L122LV3400 FF, RHD4CZ3L122SL3300 FF, RHD4CZ3L122SL3400 FF, RHD4CZ3C083LV3300 FF, RHD4CZ3C083LV3400 FF, RHD4CZ3C083SL3300 FF, RHD4CZ3C083SL3400 FF, RHD4CZ6C062SL6100 FF, RHD4CZ6A015SL6100 FF, RHD4CZ6C052SL6100 FF, RHD4CZ6A02SL6100 FF, RHD4CZ5C051SL6100 FF, RHD4CZ5RA07SL6100 FF, RHD4CZ5C061SL6100 FF, RHD4CZ5L016SL6100 FF, RHD4CZ5A014SL6100 FF, RHD4CZ5L07SL6100 FF, RHD4CZ4A013SL6100 FF, RHD4CZ4C031SL6100 FF, RHD4CZ4L014SL6100 FF, RHD4CZ4L09SL6100 FF, RHD4CZ8A011SL6100 FF, RHD4CZ8L04SL6100 FF, RHD4CZ8C014SL6100 FF, RHD4CZ9C071SL6100 FF, RHD4CZ9L05SL6100 FF, RHD4CZ9L06SL6100 FF, RHD4CZ9L02SL6100 FF, RHD4CZ2L102SL6100 FF, RHD4CZ2C082SL6100 FF, RHD4CZ7C032SL6100 FF, RHD4CZ7L03SL6100 FF, RHD4CZ7C013SL6100 FF, RHD4CZ7L015SL6100 FF, RHD4CZ7C02SL6100 FF, RHD4CZ7RA03SL6100 FF, RHD4CZ7RA05SL6100 FF, RHD4CZ1L101SL6100 FF, RHD4CZ1C081SL6100 FF, RHD4CZ3C011SL6100 FF, RHD4CZ3C083SL6100 FF, RHD4CZ6C062TC2400 FF, RHD4CZ6C062ICT2400 FF, RHD4CZ6A015TC2400 FF, RHD4CZ6A015ICT2400 FF, RHD4CZ6C052TC2400 FF, RHD4CZ6C052ICT2400 FF, RHD4CZ6A02TC2400 FF, RHD4CZ6A02ICT2400 FF, RHD4CZ6RA01TC2400 FF, RHD4CZ5C051TC2400 FF, RHD4CZ5C051ICT2400 FF, RHD4CZ5RA07TC2400 FF, RHD4CZ5RA07ICT2400 FF, RHD4CZ5C061TC2400 FF, RHD4CZ5C061ICT2400 FF, RHD4CZ5L08TC2400 FF, RHD4CZ5L08ICT2400 FF, RHD4CZ5L016TC2400 FF, RHD4CZ5L016ICT2400 FF, RHD4CZ5A014TC2400 FF, RHD4CZ5A014ICT2400 FF, RHD4CZ5L07TC2400 FF, RHD4CZ5L07ICT2400 FF, RHD4CZ4A013TC2400 FF, RHD4CZ4A013ICT2400 FF, RHD4CZ4C031TC2400 FF, RHD4CZ4C031ICT2400 FF, RHD4CZ4L014TC2400 FF, RHD4CZ4L014ICT2400 FF, RHD4CZ4L09TC2400 FF, RHD4CZ4L09ICT2400 FF, RHD4CZ4C012TC2400 FF, RHD4CZ4C012ICT2400 FF, RHD4CZ8A011TC2400 FF, RHD4CZ8A011ICT2400 FF, RHD4CZ8RA04ICT2400 FF, RHD4CZ4L01TC2400 FF, RHD4CZ4L01ICT2400 FF, RHD4CZ8L04TC2400 FF, RHD4CZ8L04ICT2400 FF, RHD4CZ8C014TC2400 FF, RHD4CZ8C014ICT2400 FF, RHD4CZ9C071TC2400 FF, RHD4CZ9C071ICT2400 FF, RHD4CZ9L05TC2400 FF, RHD4CZ9L05ICT2400 FF, RHD4CZ9L06TC2400 FF, RHD4CZ9L06ICT2400 FF, RHD4CZ9L02TC2400 FF, RHD4CZ9L02ICT2400 FF, RHD4CZ2L102TC2400 FF, RHD4CZ2L102ICT2400 FF, RHD4CZ2L011TC2400 FF, RHD4CZ2L011ICT2400 FF, RHD4CZ2C082TC2400 FF, RHD4CZ2C082ICT2400 FF, RHD4CZ7C032TC2400 FF, RHD4CZ7C032ICT2400 FF, RHD4CZ7L03TC2400 FF, RHD4CZ7L03ICT2400 FF, RHD4CZ7L131TC2400 FF, RHD4CZ7L131ICT2400 FF, RHD4CZ7C013TC2400 FF, RHD4CZ7C013ICT2400 FF, RHD4CZ7L015TC2400 FF, RHD4CZ7L015ICT2400 FF, RHD4CZ7A012TC2400 FF, RHD4CZ7A012ICT2400 FF, RHD4CZ7C02TC2400 FF, RHD4CZ7C02ICT2400 FF, RHD4CZ7RA03ICT2400 FF, RHD4CZ7RA05ICT2400 FF, RHD4CZ1L101TC2400 FF, RHD4CZ1L101ICT2400 FF, RHD4CZ1C081TC2400 FF, RHD4CZ1C081ICT2400 FF, RHD4CZ3C011ICT2400 FF, RHD4CZ3L122TC2400 FF, RHD4CZ3L122ICT2400 FF, RHD4CZ3C083TC2400 FF, RHD4CZ3C083ICT2400 FF, RHD4CZ6C062SL1500 FF, RHD4CZ6A015SL1500 FF, RHD4CZ6C052SL1500 FF, RHD4CZ6A02SL1500 FF, RHD4CZ6RA01SL1500 FF, RHD4CZ5C051SL1500 FF, RHD4CZ5RA07SL1500 FF, RHD4CZ5C061SL1500 FF, RHD4CZ5L08SL1500 FF, RHD4CZ5L016SL1500 FF, RHD4CZ5A014SL1500 FF, RHD4CZ5L07SL1500 FF, RHD4CZ4A013SL1500 FF, RHD4CZ4RA02SL1500 FF, RHD4CZ4C031SL1500 FF, RHD4CZ4L014SL1500 FF, RHD4CZ4L09SL1500 FF, RHD4CZ4C012SL1500 FF, RHD4CZ8A011SL1500 FF, RHD4CZ8RA04SL1500 FF, RHD4CZ4L01SL1500 FF, RHD4CZ8L04SL1500 FF, RHD4CZ8C014SL1500 FF, RHD4CZ9C071SL1500 FF, RHD4CZ9L05SL1500 FF, RHD4CZ9L06SL1500 FF, RHD4CZ9L02SL1500 FF, RHD4CZ2L102SL1500 FF, RHD4CZ2L011SL1500 FF, RHD4CZ2C082SL1500 FF, RHD4CZ7C032SL1500 FF, RHD4CZ7L03SL1500 FF, RHD4CZ7L131SL1500 FF, RHD4CZ7C013SL1500 FF, RHD4CZ7L015SL1500 FF, RHD4CZ7A012SL1500 FF, RHD4CZ7C02SL1500 FF, RHD4CZ7RA03SL1500 FF, RHD4CZ7RA05SL1500 FF, RHD4CZ1L101SL1500 FF, RHD4CZ1C081SL1500 FF, RHD4CZ3C011SL1500 FF, RHD4CZ3C083SL1500 FF, RHD4CZ6A015CCTV1400 FF, RHD4CZ6A015CCTV6100 FF, RHD4CZ6A02CCTV1400 FF, RHD4CZ6A02CCTV6100 FF, RHD4CZ6RA01CCTV1400 FF, RHD4CZ6RA01CCTV1500 FF, RHD4CZ6RA01CCTV6100 FF, RHD4CZ5RA07CCTV1400 FF, RHD4CZ5RA07CCTV1500 FF, RHD4CZ5RA07CCTV6100 FF, RHD4CZ5C061CCTV1400 FF, RHD4CZ5C061CCTV1500 FF, RHD4CZ5C061CCTV6100 FF, RHD4CZ5L016CCTV1400 FF, RHD4CZ5L016CCTV1500 FF, RHD4CZ5L016CCTV6100 FF, RHD4CZ5L07CCTV1400 FF, RHD4CZ5L07CCTV1500 FF, RHD4CZ5L07CCTV6100 FF, RHD4CZ4C031CCTV1400 FF, RHD4CZ4C031CCTV1500 FF, RHD4CZ4C031CCTV6100 FF, RHD4CZ4L014CCTV1400 FF, RHD4CZ4L014CCTV1500 FF, RHD4CZ4L014CCTV6100 FF, RHD4CZ8A011CCTV1400 FF, RHD4CZ8A011CCTV1500 FF, RHD4CZ8A011CCTV6100 FF, RHD4CZ8RA04CCTV1400 FF, RHD4CZ8RA04CCTV1500 FF, RHD4CZ8RA04CCTV6100 FF, RHD4CZ8L04CCTV1400 FF, RHD4CZ8L04CCTV1500 FF, RHD4CZ8L04CCTV6100 FF, RHD4CZ9L02CCTV1400 FF, RHD4CZ9L02CCTV1500 FF, RHD4CZ9L02CCTV6100 FF, RHD4CZ2L102CCTV1400 FF, RHD4CZ2L102CCTV1500 FF, RHD4CZ2L102CCTV6100 FF, RHD4CZ2C082CCTV1400 FF, RHD4CZ2C082CCTV1500 FF, RHD4CZ2C082CCTV6100 FF, RHD4CZ7C032CCTV1400 FF, RHD4CZ7C032CCTV1500 FF, RHD4CZ7C032CCTV6100 FF, RHD4CZ7L03CCTV1400 FF, RHD4CZ7L03CCTV1500 FF, RHD4CZ7L03CCTV6100 FF, RHD4CZ7C02CCTV1400 FF, RHD4CZ7C02CCTV6100 FF, RHD4CZ7RA03CCTV1400 FF, RHD4CZ7RA03CCTV1500 FF, RHD4CZ7RA03CCTV6100 FF, RHD4CZ1L101CCTV1400 FF, RHD4CZ1L101CCTV1500 FF, RHD4CZ1L101CCTV6100 FF, RHD4CZ1C081CCTV1400 FF, RHD4CZ1C081CCTV1500 FF, RHD4CZ1C081CCTV6100 FF, RHD4CZ3C083CCTV1400 FF, RHD4CZ3C083CCTV1500 FF, RHD4CZ3C083CCTV6100 FF, RHD4CZ4RA02CCTV2100 FF, RHD4CZ7L131CCTV2100 FF, RHD4CZ7L015CCTV2100 FF, RHD4CZ7L015CCTV1500 FF, RHD4CZ6C062MV3400 FF, RHD4CZ6C062MV3401 FF, RHD4CZ6RA01CCTV5200 FF, RHD4CZ6C052MV3400 FF, RHD4CZ6C052MV3401 FF, RHD4CZ5C061MV3401 FF, RHD4CZ5C061MV3400 FF, RHD4CZ5L08MV3401 FF, RHD4CZ5L08MV4200 FF, RHD4CZ5L08MV3401, RHD4CZ5L08MV3400 FF, RHD4CZ5RA07MV3400 FF, RHD4CZ5RA07MV3401 FF, RHD4CZ5RA07MV5400 FF, RHD4CZ5C051CCTV2100 FF, RHD4CZ8C014MV5400 FF, RHD4CZ8C014MV3401 FF, RHD4CZ8C014MV3400 FF, RHD4CZ4L01CCTV2100 FF, RHD4CZ3C011CCTV2100 FF, RHD4PRSHLSTAGLS1000 FF, RHD4PRSHLPOSL1300, RHD4GNPPMAT1100 FF, RHD4ENMARSUBSL400 FF, RHD4GNPPSD1100 FF, RHD4ENSDZ9SUBCCTV210, RHD4CZ1L101RW3000 FF, RHD4CZ1C081RW3000 FF, RHD4CZ1C081DM2000 FF, RHD4CZ2L102RW3002 FF, RHD4CZ2L011RW3000 FF, RHD4CZ2C082RW3000 FF, RHD4CZ4A013RW3003 FF, RHD4CZ4C031RW3000 FF, RHD4CZ4L014RW3000 FF, RHD4CZ4C012RW3000 FF, RHD4CZ3L122MV2400 FF, RHD4CZ5A014CCTV1500 FF, RHD4CZ5L08RW3000 FF |
| RHD4GNPFMIS1800 |  | Project Finish - MIS | 0d | 2028-05-30 | 2028-05-30 | RHD4HOASZ4APPSW120, RHD4HOASZ4APPPT130, RHD4HOASZ4APPIRR140, RHD4HOASZ4APPMV150, RHD4HOASZ4APPLV160, RHD4HOASZ4APPSL170, RHD4HOASZ4APPTC190, RHD4HOASZ4APPICT200 FF, RHD4HOASZ4APPCCTV210, RHD4HOASZ4APPRD220, RHD4HOASZ5APPEW100, RHD4HOASZ5APPST110, RHD4HOASZ5APPSW120, RHD4HOASZ5APPPT130, RHD4HOASZ5APPIRR140, RHD4HOASZ5APPMV150, RHD4HOASZ5APPLV160, RHD4HOASZ5APPSL170, RHD4HOASZ5APPTC190, RHD4HOASZ5APPICT200 FF, RHD4HOASZ5APPCCTV210, RHD4HOASZ5APPRD220, RHD4HOASZ6APPEW100, RHD4HOASZ6APPST110, RHD4HOASZ6APPSW120, RHD4HOASZ6APPPT130, RHD4HOASZ6APPIRR140, RHD4HOASZ6APPMV150, RHD4HOASZ6APPLV160, RHD4HOASZ6APPSL170, RHD4HOASZ6APPTC190, RHD4HOASZ6APPICT200 FF, RHD4HOASZ6APPCCTV210, RHD4HOASZ6APPRD220, RHD4HOASZ7APPEW100, RHD4HOASZ7APPST110, RHD4HOASZ7APPSW120, RHD4HOASZ7APPPT130, RHD4HOASZ7APPIRR140, RHD4HOASZ7APPMV150, RHD4HOASZ7APPLV160, RHD4HOASZ7APPSL170, RHD4HOASZ7APPTC190, RHD4HOASZ7APPICT200 FF, RHD4HOASZ7APPCCTV210, RHD4HOASZ7APPRD220, RHD4HOASZ8APPEW100, RHD4HOASZ8APPST110, RHD4HOASZ8APPSW120, RHD4HOASZ8APPPT130, RHD4HOASZ8APPIRR140, RHD4HOASZ8APPMV150, RHD4HOASZ8APPLV160, RHD4HOASZ8APPSL170, RHD4HOASZ8APPTC190, RHD4HOASZ8APPICT200 FF, RHD4HOASZ8APPCCTV210, RHD4HOASZ8APPRD220, RHD4HOASZ9APPEW100, RHD4HOASZ9APPST110, RHD4HOASZ9APPSW120, RHD4HOASZ9APPPT130, RHD4HOASZ9APPIRR140, RHD4HOASZ9APPMV150, RHD4HOASZ9APPLV160, RHD4HOASZ9APPSL170, RHD4HOASZ9APPTC190, RHD4HOASZ9APPICT200 FF, RHD4HOASZ9APPCCTV210, RHD4HOASZ9APPRD220, RHD4HOASTUN1APP1000, RHD4HOASTUN1APP1100, RHD4HOASTUN1APP1200, RHD4HOASSWL1APP1000, RHD4HOASSWL1APP1100, RHD4HOASSWL1APP1200, RHD4HOASSWL1APP1300, RHD4HOASSTL1APP1000, RHD4HOASSTL1APP1100, RHD4HOASSTL1APP1200, RHD4HOASSTL1APP1300, RHD4GNHOOS1214, RHD4GNHOWG1215, RHD4GNHOFM1216, RHD4CZ6C062RD7100 FF, RHD4CZ6A015RD7100 FF, RHD4CZ6C052RD7100 FF, RHD4CZ5C051RD7100 FF, RHD4CZ5RA07RD7100 FF, RHD4CZ5C061RD7100 FF, RHD4CZ5L08RD7100 FF, RHD4CZ5L016RD7100 FF, RHD4CZ5A014RD7100 FF, RHD4CZ5L07RD7100 FF, RHD4CZ4A013RD7100 FF, RHD4CZ4RA02RD7100 FF, RHD4CZ4C031RD7100 FF, RHD4CZ4L014RD7100 FF, RHD4CZ4L09RD7100 FF, RHD4CZ4C012RD7100 FF, RHD4CZ8A011RD7100 FF, RHD4CZ8RA04RD7100 FF, RHD4CZ4L01RD7100 FF, RHD4CZ8L04RD7100 FF, RHD4CZ8C014RD7100 FF, RHD4CZ9C071RD7100 FF, RHD4CZ9L05RD7100 FF, RHD4CZ9L06RD7100 FF, RHD4CZ9L02RD7100 FF, RHD4CZ2L102RD7100 FF, RHD4CZ2L011RD7100 FF, RHD4CZ2C082RD7100 FF, RHD4CZ7C032RD7100 FF, RHD4CZ7L03RD7100 FF, RHD4CZ7L131RD7100 FF, RHD4CZ7C013RD7100 FF, RHD4CZ7L015RD7100 FF, RHD4CZ7A012RD7100 FF, RHD4CZ7C02RD7100 FF, RHD4CZ7RA03RD7100 FF, RHD4CZ1L101RD7100 FF, RHD4CZ1C081RD7100 FF, RHD4CZ3C011RD7100 FF, RHD4CZ3L122RD7100 FF, RHD4CZ3C083RD7100 FF, RHD4CZ3L122RD4100 FF, RHD4GNHOFM1217 FF, RHD4GNHODMOB1000 FF, RHD4GNHODMOB1100 FF, RHD4GNHODMOB1200 FF, RHD4GNHODMOB1300 FF, RHD4GNHODMOB1400 FF, RHD4GNHOOS1214 FF, RHD4GNHOWG1215 FF, RHD4CZ7RA05RD9100 FF, RHD4CZ7RA05RD7100 FF, RHD4GNMRDMIS1200 FF, RHD4GNMOBMIS1100 FF, RHD4GNENMIS1300 FF, RHD4GNPROMIS1400 FF, RHD4GN10MMIS1500 FF, RHD4GN18MMIS1600 FF, RHD4GN24MMIS1700 FF, RHD4CZ9L06ICT2400, RHD4CZ9L06TC2400, RHD4HOASZ6SUBTC190, RHD4PRSHLSTAGLS1000, RHD4PRSHLPOSL1300 SS, RHD4GNPPMAT1100, RHD4ENMARSUBSL400 SS, RHD4GNPPSD1100, RHD4ENSDZ9SUBCCTV210 SS, A1000, RHD4CZ8A011SW2500 FF, RHD4CZ8RA04RD8100 FF, RHD4CZ9L02IRR3201 FF, RHD4CZ7L03SW1500 FF, RHD4CZ7C02SW1500 FF, RHD4CZ7RA05RD8100 FF, RHD4HOASZ1APPEW100, RHD4HOASZ1APPST110, RHD4HOASZ1APPSW120, RHD4HOASZ1APPPT130, RHD4HOASZ1APPIRR140, RHD4HOASZ1APPMV150, RHD4HOASZ1APPLV160, RHD4HOASZ1APPSL170, RHD4HOASZ1APPTC190, RHD4HOASZ1APPICT200 FF, RHD4HOASZ1APPCCTV210, RHD4HOASZ1APPRD220, RHD4HOASZ2APPEW100, RHD4HOASZ2APPST110, RHD4HOASZ2APPSW120, RHD4HOASZ2APPPT130, RHD4HOASZ2APPIRR140, RHD4HOASZ2APPMV150, RHD4HOASZ2APPLV160, RHD4HOASZ2APPSL170, RHD4HOASZ2APPTC190, RHD4HOASZ2APPICT200 FF, RHD4HOASZ2APPCCTV210, RHD4HOASZ2APPRD220, RHD4HOASZ3APPEW100, RHD4HOASZ3APPST110, RHD4HOASZ3APPSW120, RHD4HOASZ3APPPT130, RHD4HOASZ3APPIRR140, RHD4HOASZ3APPMV150, RHD4HOASZ3APPLV160, RHD4HOASZ3APPSL170, RHD4HOASZ3APPTC190, RHD4HOASZ3APPICT200 FF, RHD4HOASZ3APPCCTV210, RHD4HOASZ3APPRD220, RHD4HOASZ4APPEW100, RHD4HOASZ4APPST110 |
|  | 9 | **RHD4-02-002-Preliminaries - PP** |  | 2025-11-30 | 2025-12-29 |  |
|  | 10 | **RHD4-02-002-Soil Investigation** |  | 2025-11-30 | 2025-12-13 |  |
| RHD4GNPPSoL1000 |  | Prepare & Submit Soil Investigation - PP | 6d | 2025-11-30 | 2025-12-06 | RHD4GNPSMIS1000 SS |
| RHD4GNPPSoL1100 |  | Review & approval Soil Investigation - PP | 6d | 2025-12-07 | 2025-12-13 | RHD4GNPPSoL1000 |
|  | 11 | **RHD4-02-002-Land Surveying Works** |  | 2025-11-30 | 2025-12-13 |  |
| RHD4GNPPSuv1000 |  | Prepare & Submit Land surveying works - PP | 6d | 2025-11-30 | 2025-12-06 | RHD4GNPSMIS1000 SS |
| RHD4GNPPSuv1100 |  | Review & approval Land surveying works - PP | 6d | 2025-12-07 | 2025-12-13 | RHD4GNPPSuv1000 |
|  | 12 | **RHD4-02-002-Shop Drawings Submission Plan** |  | 2025-11-30 | 2025-12-14 |  |
| RHD4GNPPSD1000 |  | Prepare & Submit Shop Drawings Submission Plan - PP | 7d | 2025-11-30 | 2025-12-07 | RHD4GNPSMIS1000 SS |
| RHD4GNPPSD1100 |  | Review & approval Shop Drawings Submission Plan - PP | 6d | 2025-12-08 | 2025-12-14 | RHD4GNPPSD1000 |
|  | 13 | **RHD4-02-002-Material submittal plan** |  | 2025-11-30 | 2025-12-11 |  |
| RHD4GNPPMAT1000 |  | Prepare & Submit Material submittal plan - PP(Completed) | 7d | 2025-11-30 | 2025-12-07 | RHD4GNPSMIS1000 SS |
| RHD4GNPPMAT1100 |  | Review & approval Material submittal plan - PP | 4d | 2025-12-08 | 2025-12-11 | RHD4GNPSMIS1000 SS, RHD4GNPPMAT1000 |
|  | 14 | **RHD4-02-002-Project Schedule** |  | 2025-11-30 | 2025-12-17 |  |
| RHD4GNPPBL1000 |  | Prepare & Submit Project Schedule - PP | 8d | 2025-11-30 | 2025-12-08 | RHD4GNPSMIS1000 |
| RHD4GNPPBL1100 |  | Review & approval Project Schedule - PP | 8d | 2025-12-09 | 2025-12-17 | RHD4GNPPBL1000 |
|  | 15 | **RHD4-02-002-HSE (Health, Safety & Environment) Plan** |  | 2025-11-30 | 2025-12-17 |  |
| RHD4GNPPHSE1000 |  | Prepare & Submit HSE (Health, Safety & Environment) Plan - PP | 8d | 2025-11-30 | 2025-12-08 | RHD4GNPSMIS1000 SS |
| RHD4GNPPHSE1100 |  | Review & approval HSE (Health, Safety & Environment) Plan - PP | 8d | 2025-12-09 | 2025-12-17 | RHD4GNPPHSE1000 |
|  | 16 | **RHD4-02-002-Logistic Plan-Site Mobilization Plan** |  | 2025-11-30 | 2025-12-03 |  |
| RHD4GNPPLOG1000 |  | Prepare & Submit Logistic Plan-Site Mobilization Plan - PP | 2d | 2025-11-30 | 2025-12-01 | RHD4GNPSMIS1000 SS |
| RHD4GNPPLOG1100 |  | Review & approval Logistic Plan-Site Mobilization Plan - PP | 2d | 2025-12-02 | 2025-12-03 | RHD4GNPPLOG1000 |
|  | 17 | **RHD4-02-002-Organization chart and Recruitment plan** |  | 2025-11-30 | 2025-12-27 |  |
| RHD4GNPPORG1000 |  | Prepare & Submit Organization chart and Recruitment plan - PP | 12d | 2025-11-30 | 2025-12-13 | RHD4GNPSMIS1000 SS |
| RHD4GNPPORG1100 |  | Review & approval Organization chart and Recruitment plan - PP | 12d | 2025-12-14 | 2025-12-27 | RHD4GNPPORG1000 |
|  | 18 | **RHD4-02-002-Project management plans** |  | 2025-11-30 | 2025-12-29 |  |
| RHD4GNPPPMP1000 |  | Prepare & Submit Project management plans - PP(Completed) | 13d | 2025-11-30 | 2025-12-14 | RHD4GNPSMIS1000 SS |
| RHD4GNPPPMP1100 |  | Review & approval Project management plans - PP | 13d | 2025-12-15 | 2025-12-29 | RHD4GNPSMIS1000 SS, RHD4GNPPPMP1000 |
|  | 8 | **RHD4-02-002-Mobilization - MOB** |  | 2025-11-30 | 2026-01-03 |  |
| RHD4GNMOB1200 |  | Access Road works - MOB | 14d | 2025-11-30 | 2025-12-15 | RHD4GNPSMIS1000 |
| RHD4GNMOB1000 |  | Installing Of Offices - MOB | 10d | 2025-12-04 | 2025-12-15 | RHD4GNMOB1200 SS, RHD4GNMOB1200 FF |
| RHD4GNMOB1300 |  | Build up Project Store - MOB | 6d | 2025-12-16 | 2025-12-22 | RHD4GNMOB1200 |
| RHD4GNMOB1400 |  | Install of Project Signboard - MOB | 6d | 2025-12-16 | 2025-12-22 | RHD4GNMOB1200 |
| RHD4GNMOB1100 |  | Mobalization Of Equipment - MOB | 10d | 2025-12-23 | 2026-01-03 | RHD4GNMOB1000, RHD4GNMOB1300, RHD4GNMOB1400 |
| RHD4GNMOB1500 |  | Preparation Of Parking Area - MOB | 6d | 2025-12-23 | 2025-12-29 | RHD4GNMOB1000, RHD4GNMOB1300 |
|  | 20 | **RHD4-02-002-Engineering - EN** |  | 2025-11-30 | 2026-01-28 |  |
|  | 83 | **RHD4-02-002-Method Statement - MS** |  | 2025-11-30 | 2026-01-25 |  |
|  | 84 | **RHD4-02-002-Earth Works (Excavation, Backfilling) - EW** |  | 2025-11-30 | 2025-12-15 |  |
| RHD4ENMSEW1000 |  | Prepare & Submit MS for Earth Works (Excavation, Backfilling) - EW- EW | 7d | 2025-11-30 | 2025-12-07 | RHD4GNPSMIS1000 SS |
| RHD4ENMSEW2000 |  | Review & approval MS for Earth Works (Excavation, Backfilling) - EW- EW | 7d | 2025-12-08 | 2025-12-15 | RHD4ENMSEW1000 |
|  | 85 | **RHD4-02-002-Tunnel - TUN** |  | 2025-12-08 | 2025-12-16 |  |
| RHD4ENMSTUN1000 |  | Prepare & Submit MS for Tunnel - TUN- TUN | 5d | 2025-12-08 | 2025-12-13 | RHD4GNPSMIS1000 SS, RHD4ENMSEW1000 |
| RHD4ENMSTUN2000 |  | Review & approval MS for Tunnel - TUN- TUN | 3d | 2025-12-14 | 2025-12-16 | RHD4ENMSTUN1000 |
|  | 86 | **RHD4-02-002-Asphalt Works - ASPH** |  | 2025-12-28 | 2026-01-12 |  |
| RHD4ENMSASPH1000 |  | Prepare & Submit MS for Asphalt Works - ASPH- ASPH | 6d | 2025-12-28 | 2026-01-03 | RHD4GNPSMIS1000 SS, RHD4ENMSTUN1000, RHD4ENMSST1000, RHD4ENMSTUN2000 |
| RHD4ENMSASPH2000 |  | Review & approval MS for Asphalt Works - ASPH- ASPH | 8d | 2026-01-04 | 2026-01-12 | RHD4GNMOB1500, RHD4ENMSASPH1000 |
|  | 87 | **RHD4-02-002-Storm Network - ST** |  | 2025-12-14 | 2026-01-05 |  |
| RHD4ENMSST1000 |  | Prepare & Submit MS for Storm Network - ST- ST(Completed) | 12d | 2025-12-14 | 2025-12-27 | RHD4GNPSMIS1000 SS, RHD4ENMSTUN1000 |
| RHD4ENMSST2000 |  | Review & approval MS for Storm Network - ST- ST | 8d | 2025-12-28 | 2026-01-05 | RHD4GNPSMIS1000 SS, RHD4ENMSTUN1000, RHD4ENMSST1000 |
|  | 88 | **RHD4-02-002-Sewage Network - SW** |  | 2025-12-16 | 2025-12-31 |  |
| RHD4ENMSSW1000 |  | Prepare & Submit MS for Sewage Network - SW- SW | 7d | 2025-12-16 | 2025-12-23 | RHD4GNPSMIS1000 SS, RHD4GNMOB1200 |
| RHD4ENMSSW2000 |  | Review & approval MS for Sewage Network - SW- SW | 7d | 2025-12-24 | 2025-12-31 | RHD4ENMSSW1000 |
|  | 89 | **RHD4-02-002-Potable Network - PT** |  | 2025-12-24 | 2026-01-03 |  |
| RHD4ENMSPT1000 |  | Prepare & Submit MS for Potable Network - PT- PT | 6d | 2025-12-24 | 2025-12-30 | RHD4GNPSMIS1000 SS, RHD4ENMSSW1000 |

| ID | WBS | Task | Duration | Start | Finish | Predecessors |
| --- | --- | --- | --- | --- | --- | --- |
| RHD4ENMSPT2000 |  | Review & approval MS for Potable Network - PT- PT | 3d | 2025-12-31 | 2026-01-03 | RHD4ENMSPT1000 |
|  | 90 | **RHD4-02-002-Irrigation Network - IRR** |  | 2025-12-31 | 2026-01-25 |  |
| RHD4ENMSRR1000 |  | Prepare & Submit MS for Irrigation Network - IRR- RR(Completed) | 12d | 2025-12-31 | 2026-01-13 | RHD4GNPSMIS1000 SS, RHD4ENMSPT1000 |
| RHD4ENMSRR2000 |  | Review & approval MS for Irrigation Network - IRR- RR | 10d | 2026-01-14 | 2026-01-25 | RHD4GNPSMIS1000 SS, RHD4ENMSPT1000, RHD4ENMSRR1000 |
|  | 91 | **RHD4-02-002-Medium Voltage Cables - MV** |  | 2026-01-04 | 2026-01-17 |  |
| RHD4ENMSMV1000 |  | Prepare & Submit MS for Medium Voltage Cables - MV- MV | 6d | 2026-01-04 | 2026-01-10 | RHD4GNPSMIS1000 SS, RHD4ENMSASPH1000 |
| RHD4ENMSMV2000 |  | Review & approval MS for Medium Voltage Cables - MV- MV | 6d | 2026-01-11 | 2026-01-17 | RHD4ENMSMV1000 |
|  | 92 | **RHD4-02-002-Low Voltage Cables - LV** |  | 2025-11-30 | 2025-12-16 |  |
| RHD4ENMSLV1000 |  | Prepare & Submit MS for Low Voltage Cables - LV- LV | 13d | 2025-11-30 | 2025-12-14 | RHD4GNPSMIS1000 SS |
| RHD4ENMSLV2000 |  | Review & approval MS for Low Voltage Cables - LV- LV | 2d | 2025-12-15 | 2025-12-16 | RHD4ENMSLV1000 |
|  | 93 | **RHD4-02-002-Street Lighting - SL** |  | 2025-11-30 | 2025-12-16 |  |
| RHD4ENMSSL1000 |  | Prepare & Submit MS for Street Lighting - SL- SL | 13d | 2025-11-30 | 2025-12-14 | RHD4GNPSMIS1000 SS |
| RHD4ENMSSL2000 |  | Review & approval MS for Street Lighting - SL- SL | 2d | 2025-12-15 | 2025-12-16 | RHD4ENMSSL1000 |
|  | 94 | **RHD4-02-002-Earthing - ER** |  | 2026-01-11 | 2026-01-24 |  |
| RHD4ENMSER1000 |  | Prepare & Submit MS for Earthing - ER- ER | 6d | 2026-01-11 | 2026-01-17 | RHD4GNPSMIS1000 SS, RHD4ENMSMV1000, RHD4ENMSST2000 |
| RHD4ENMSER2000 |  | Review & approval MS for Earthing - ER- ER | 6d | 2026-01-18 | 2026-01-24 | RHD4ENMSER1000 |
|  | 95 | **RHD4-02-002-Precast Concrete Curbstone, Interlocking - RD** |  | 2025-11-30 | 2026-01-05 |  |
| RHD4ENMSRD1000 |  | Prepare & Submit MS for Precast Concrete Curbstone, Interlocking - RD- RD(Completed) | 13d | 2025-11-30 | 2025-12-14 | RHD4GNPSMIS1000 SS |
| RHD4ENMSRD2000 |  | Review & approval MS for Precast Concrete Curbstone, Interlocking - RD- RD | 2d | 2026-01-04 | 2026-01-05 | RHD4ENMSASPH1000, RHD4GNPSMIS1000 SS, RHD4ENMSRD1000 |
|  | 96 | **RHD4-02-002-Precast Box Culvert - BC** |  | 2025-12-28 | 2026-01-08 |  |
| RHD4ENMSBC1000 |  | Prepare & Submit MS for Precast Box Culvert - BC- BC | 5d | 2025-12-28 | 2026-01-01 | RHD4GNPSMIS1000 SS, RHD4ENMSTUN1000, RHD4ENMSST1000 |
| RHD4ENMSBC2000 |  | Review & approval MS for Precast Box Culvert - BC- BC | 6d | 2026-01-03 | 2026-01-08 | RHD4ENMSBC1000 |
|  | 1 | **RHD4-02-002-MS Staging Time - STAG** |  | 2025-12-16 | 2026-01-28 |  |
|  | 84 | **RHD4-02-002-Earth Works (Excavation, Backfilling) - EW** |  | 2025-12-16 | 2025-12-23 |  |
| RHD4ENMSEW2010 |  | Staging Time for MS for Earth Works (Excavation, Backfilling) - EW- EW | 7d | 2025-12-16 | 2025-12-23 | RHD4ENMSEW2000 |
|  | 85 | **RHD4-02-002-Tunnel - TUN** |  | 2025-12-17 | 2025-12-24 |  |
| RHD4ENMSTUN2010 |  | Staging Time for MS for Tunnel - TUN- TUN | 7d | 2025-12-17 | 2025-12-24 | RHD4ENMSTUN2000 |
|  | 86 | **RHD4-02-002-Asphalt Works - ASPH** |  | 2026-01-13 | 2026-01-20 |  |
| RHD4ENMSASPH2010 |  | Staging Time for MS for Asphalt Works - ASPH- ASPH | 7d | 2026-01-13 | 2026-01-20 | RHD4ENMSASPH2000 |
|  | 87 | **RHD4-02-002-Storm Network - ST** |  | 2026-01-06 | 2026-01-13 |  |
| RHD4ENMSST2010 |  | Staging Time for MS for Storm Network - ST- ST | 7d | 2026-01-06 | 2026-01-13 | RHD4ENMSST2000 |
|  | 88 | **RHD4-02-002-Sewage Network - SW** |  | 2026-01-01 | 2026-01-08 |  |
| RHD4ENMSSW2010 |  | Staging Time for MS for Sewage Network - SW- SW | 7d | 2026-01-01 | 2026-01-08 | RHD4ENMSSW2000 |
|  | 89 | **RHD4-02-002-Potable Network - PT** |  | 2026-01-04 | 2026-01-11 |  |
| RHD4ENMSPT2010 |  | Staging Time for MS for Potable Network - PT- PT | 7d | 2026-01-04 | 2026-01-11 | RHD4ENMSPT2000 |
|  | 90 | **RHD4-02-002-Irrigation Network - IRR** |  | 2026-01-26 | 2026-01-28 |  |
| RHD4ENMSRR2010 |  | Staging Time for MS for Irrigation Network - IRR- RR | 3d | 2026-01-26 | 2026-01-28 | RHD4ENMSRR2000, RHD4ENMSMV2010, RHD4ENMSTUN2010 |
|  | 91 | **RHD4-02-002-Medium Voltage Cables - MV** |  | 2026-01-18 | 2026-01-25 |  |
| RHD4ENMSMV2010 |  | Staging Time for MS for Medium Voltage Cables - MV- MV | 7d | 2026-01-18 | 2026-01-25 | RHD4ENMSMV2000, RHD4ENMSPT2010, RHD4ENMSSW2010 |
|  | 92 | **RHD4-02-002-Low Voltage Cables - LV** |  | 2025-12-17 | 2025-12-21 |  |
| RHD4ENMSLV2010 |  | Staging Time for MS for Low Voltage Cables - LV- LV | 4d | 2025-12-17 | 2025-12-21 | RHD4ENMSLV2000 |
|  | 93 | **RHD4-02-002-Street Lighting - SL** |  | 2025-12-17 | 2025-12-21 |  |
| RHD4ENMSSL2010 |  | Staging Time for MS for Street Lighting - SL- SL | 4d | 2025-12-17 | 2025-12-21 | RHD4ENMSSL2000 |
|  | 94 | **RHD4-02-002-Earthing - ER** |  | 2026-01-25 | 2026-01-28 |  |
| RHD4ENMSER2010 |  | Staging Time for MS for Earthing - ER- ER | 4d | 2026-01-25 | 2026-01-28 | RHD4ENMSER2000, RHD4ENMSBC2010, RHD4ENMSRD2010, RHD4ENMSST2010 |
|  | 95 | **RHD4-02-002-Precast Concrete Curbstone, Interlocking - RD** |  | 2026-01-06 | 2026-01-13 |  |
| RHD4ENMSRD2010 |  | Staging Time for MS for Precast Concrete Curbstone, Interlocking - RD- RD | 7d | 2026-01-06 | 2026-01-13 | RHD4ENMSRD2000 |
|  | 96 | **RHD4-02-002-Precast Box Culvert - BC** |  | 2026-01-10 | 2026-01-17 |  |
| RHD4ENMSBC2010 |  | Staging Time for MS for Precast Box Culvert - BC- BC | 7d | 2026-01-10 | 2026-01-17 | RHD4ENMSBC2000 |
|  | 21 | **RHD4-02-002-Shop Drawings - SD** |  | 2025-12-04 | 2026-01-28 |  |
|  | 22 | **RHD4-02-002-Shop Drawing Submittals - SUB** |  | 2025-12-04 | 2026-01-25 |  |
|  | 23 | **RHD4-02-002-Shop Drawing Submittals - SUB-Z1** |  | 2025-12-14 | 2026-01-11 |  |
| RHD4ENSDZ1SUBEW100 |  | Prepare and Submit Shop Drawings for Road Plans and Profile for EW-Z1-SUB | 6d | 2025-12-14 | 2025-12-20 | RHD4GNPPSoL1100, RHD4GNPPSuv1100, RHD4GNPPSD1100 FF |
| RHD4ENSDZ1SUBST110 |  | Prepare and Submit Shop Drawings for Storm Water Network for ST-Z1-SUB | 6d | 2025-12-14 | 2025-12-20 | RHD4ENSDZ1SUBEW100 SS |
| RHD4ENSDZ1SUBSW120 |  | Prepare and Submit Shop Drawings for Sewage Network for SW-Z1-SUB | 6d | 2025-12-14 | 2025-12-20 | RHD4ENSDZ1SUBST110 SS |
| RHD4ENSDZ1SUBPT130 |  | Prepare and Submit Shop Drawings for Potable Water Network for PT-Z1-SUB | 6d | 2025-12-21 | 2025-12-27 | RHD4ENSDZ1SUBSW120 |
| RHD4ENSDZ1SUBIRR140 |  | Prepare and Submit Shop Drawings for Irrigation Network for IRR-Z1-SUB | 6d | 2025-12-28 | 2026-01-03 | RHD4ENSDZ1SUBPT130 |
| RHD4ENSDZ1SUBCCTV210 |  | Prepare and Submit Shop Drawings for Security Network for CCTV-Z1-SUB | 6d | 2026-01-04 | 2026-01-10 | RHD4ENSDZ1SUBICT200 SS |
| RHD4ENSDZ1SUBICT200 |  | Prepare and Submit Shop Drawings for Information and Communication Technologies Network for ICT-Z1-SUB | 6d | 2026-01-04 | 2026-01-10 | RHD4ENSDZ1SUBTC190 SS |
| RHD4ENSDZ1SUBLV160 |  | Prepare and Submit Shop Drawings for Low Voltage Network for LV-Z1-SUB | 6d | 2026-01-04 | 2026-01-10 | RHD4ENSDZ1SUBSL170 SS |
| RHD4ENSDZ1SUBMV150 |  | Prepare and Submit Shop Drawings for Medium Voltage Network for MV-Z1-SUB | 6d | 2026-01-04 | 2026-01-10 | RHD4GNPPSD1100, RHD4ENSDZ1SUBIRR140 |
| RHD4ENSDZ1SUBRD220 |  | Prepare and Submit Shop Drawings for Road Works( KERBING AND PAVEMENT ) for RD-Z1-SUB(Completed) | 7d | 2026-01-04 | 2026-01-11 | RHD4GNPPSD1100 FF, RHD4ENSDZ4SUBRD220 |
| RHD4ENSDZ1SUBSL170 |  | Prepare and Submit Shop Drawings for Street Lighting Network for SL-Z1-SUB | 6d | 2026-01-04 | 2026-01-10 | RHD4ENSDZ1SUBRD220 SS |
| RHD4ENSDZ1SUBTC190 |  | Prepare and Submit Shop Drawings for Telecommunications Network for TC-Z1-SUB | 6d | 2026-01-04 | 2026-01-10 | RHD4ENSDZ1SUBLV160 SS |
|  | 24 | **RHD4-02-002-Shop Drawing Submittals - SUB-Z2** |  | 2025-12-14 | 2026-01-14 |  |
| RHD4ENSDZ2SUBEW100 |  | Prepare and Submit Shop Drawings for Road Plans and Profile for SUB-SD-Z2 | 7d | 2025-12-14 | 2025-12-21 | RHD4GNPPSoL1100, RHD4GNPPSuv1100, RHD4GNPPSD1100 FF |
| RHD4ENSDZ2SUBPT130 |  | Prepare and Submit Shop Drawings for Potable Water Network for SUB-SD-Z2 | 7d | 2025-12-22 | 2025-12-29 | RHD4ENSDZ2SUBSW120 SS |
| RHD4ENSDZ2SUBST110 |  | Prepare and Submit Shop Drawings for Storm Water Network for SUB-SD-Z2 | 6d | 2025-12-22 | 2025-12-28 | RHD4ENSDZ2SUBEW100 |
| RHD4ENSDZ2SUBSW120 |  | Prepare and Submit Shop Drawings for Sewage Network for SUB-SD-Z2 | 7d | 2025-12-22 | 2025-12-29 | RHD4ENSDZ2SUBST110 SS |
| RHD4ENSDZ2SUBIRR140 |  | Prepare and Submit Shop Drawings for Irrigation Network for SUB-SD-Z2 | 7d | 2025-12-30 | 2026-01-06 | RHD4ENSDZ2SUBPT130 |

| ID | WBS | Task | Duration | Start | Finish | Predecessors |
| --- | --- | --- | --- | --- | --- | --- |
| RHD4ENSDZ2SUBCCTV210 |  | Prepare and Submit Shop Drawings for Security Network for SUB-SD-Z2 | 7d | 2026-01-04 | 2026-01-11 | RHD4ENSDZ2SUBICT200 SS |
| RHD4ENSDZ2SUBICT200 |  | Prepare and Submit Shop Drawings for Information and Communication Technologies Network for SUB-SD-Z2 | 7d | 2026-01-04 | 2026-01-11 | RHD4ENSDZ2SUBTC190 SS |
| RHD4ENSDZ2SUBLV160 |  | Prepare and Submit Shop Drawings for Low Voltage Network for SUB-SD-Z2 | 7d | 2026-01-04 | 2026-01-11 | RHD4ENSDZ2SUBSL170 SS |
| RHD4ENSDZ2SUBRD220 |  | Prepare and Submit Shop Drawings for Road Works( KERBING AND PAVEMENT ) for SUB-SD-Z2(Completed) | 7d | 2026-01-04 | 2026-01-11 | RHD4GNPPSD1100 FF, RHD4ENSDZ4SUBRD220, RHD4ENSDZ1SUBST110 |
| RHD4ENSDZ2SUBSL170 |  | Prepare and Submit Shop Drawings for Street Lighting Network for SUB-SD-Z2 | 7d | 2026-01-04 | 2026-01-11 | RHD4ENSDZ2SUBRD220 SS |
| RHD4ENSDZ2SUBTC190 |  | Prepare and Submit Shop Drawings for Telecommunications Network for SUB-SD-Z2 | 6d | 2026-01-04 | 2026-01-10 | RHD4ENSDZ2SUBLV160 SS |
| RHD4ENSDZ2SUBMV150 |  | Prepare and Submit Shop Drawings for Medium Voltage Network for SUB-SD-Z2 | 7d | 2026-01-07 | 2026-01-14 | RHD4GNPPSD1100, RHD4ENSDZ2SUBIRR140 |
|  | 25 | **RHD4-02-002-Shop Drawing Submittals - SUB-Z3** |  | 2025-12-14 | 2026-01-10 |  |
| RHD4ENSDZ3SUBEW100 |  | Prepare and Submit Shop Drawings for Road Plans and Profile for SUB-SD-Z3 | 6d | 2025-12-14 | 2025-12-20 | RHD4GNPPSoL1100, RHD4GNPPSuv1100 |
| RHD4ENSDZ3SUBRD220 |  | Prepare and Submit Shop Drawings for Road Works( KERBING AND PAVEMENT ) for SUB-SD-Z3 | 6d | 2025-12-16 | 2025-12-22 | RHD4GNMOB1200 |
| RHD4ENSDZ3SUBPT130 |  | Prepare and Submit Shop Drawings for Potable Water Network for SUB-SD-Z3 | 6d | 2025-12-21 | 2025-12-27 | RHD4ENSDZ3SUBSW120 SS |
| RHD4ENSDZ3SUBST110 |  | Prepare and Submit Shop Drawings for Storm Water Network for SUB-SD-Z3 | 6d | 2025-12-21 | 2025-12-27 | RHD4ENSDZ3SUBEW100 |
| RHD4ENSDZ3SUBSW120 |  | Prepare and Submit Shop Drawings for Sewage Network for SUB-SD-Z3 | 6d | 2025-12-21 | 2025-12-27 | RHD4ENSDZ3SUBST110 SS |
| RHD4ENSDZ3SUBCCTV210 |  | Prepare and Submit Shop Drawings for Security Network for SUB-SD-Z3 | 6d | 2025-12-23 | 2025-12-29 | RHD4ENSDZ3SUBICT200 SS |
| RHD4ENSDZ3SUBICT200 |  | Prepare and Submit Shop Drawings for Information and Communication Technologies Network for SUB-SD-Z3 | 6d | 2025-12-23 | 2025-12-29 | RHD4ENSDZ3SUBTC190 SS |
| RHD4ENSDZ3SUBLV160 |  | Prepare and Submit Shop Drawings for Low Voltage Network for SUB-SD-Z3 | 6d | 2025-12-23 | 2025-12-29 | RHD4ENSDZ3SUBSL170 SS |
| RHD4ENSDZ3SUBSL170 |  | Prepare and Submit Shop Drawings for Street Lighting Network for SUB-SD-Z3 | 6d | 2025-12-23 | 2025-12-29 | RHD4ENSDZ3SUBRD220 |
| RHD4ENSDZ3SUBTC190 |  | Prepare and Submit Shop Drawings for Telecommunications Network for SUB-SD-Z3 | 6d | 2025-12-23 | 2025-12-29 | RHD4ENSDZ3SUBLV160 SS |
| RHD4ENSDZ3SUBIRR140 |  | Prepare and Submit Shop Drawings for Irrigation Network for SUB-SD-Z3 | 6d | 2025-12-28 | 2026-01-03 | RHD4ENSDZ3SUBPT130 |
| RHD4ENSDZ3SUBMV150 |  | Prepare and Submit Shop Drawings for Medium Voltage Network for SUB-SD-Z3 | 6d | 2026-01-04 | 2026-01-10 | RHD4GNPPSD1100, RHD4ENSDZ3SUBIRR140 |
|  | 26 | **RHD4-02-002-Shop Drawing Submittals - SUB-Z4** |  | 2025-12-14 | 2026-01-03 |  |
| RHD4ENSDZ4SUBEW100 |  | Prepare and Submit Shop Drawings for Road Plans and Profile for SUB-SD-Z4 | 9d | 2025-12-14 | 2025-12-23 | RHD4GNPPSoL1100, RHD4GNPPSuv1100 |
| RHD4ENSDZ4SUBPT130 |  | Prepare and Submit Shop Drawings for Potable Water Network for SUB-SD-Z4 | 6d | 2025-12-14 | 2025-12-20 | RHD4ENSDZ4SUBSW120 SS |
| RHD4ENSDZ4SUBST110 |  | Prepare and Submit Shop Drawings for Storm Water Network for SUB-SD-Z4 | 6d | 2025-12-14 | 2025-12-20 | RHD4ENSDZ4SUBEW100 SS |
| RHD4ENSDZ4SUBSW120 |  | Prepare and Submit Shop Drawings for Sewage Network for SUB-SD-Z4 | 7d | 2025-12-14 | 2025-12-21 | RHD4ENSDZ4SUBST110 SS |
| RHD4ENSDZ4SUBIRR140 |  | Prepare and Submit Shop Drawings for Irrigation Network for SUB-SD-Z4 | 6d | 2025-12-21 | 2025-12-27 | RHD4ENSDZ4SUBPT130 |
| RHD4ENSDZ4SUBCCTV210 |  | Prepare and Submit Shop Drawings for Security Network for SUB-SD-Z4 | 7d | 2025-12-24 | 2025-12-31 | RHD4ENSDZ4SUBICT200 SS |
| RHD4ENSDZ4SUBICT200 |  | Prepare and Submit Shop Drawings for Information and Communication Technologies Network for SUB-SD-Z4 | 7d | 2025-12-24 | 2025-12-31 | RHD4ENSDZ4SUBTC190 SS |
| RHD4ENSDZ4SUBLV160 |  | Prepare and Submit Shop Drawings for Low Voltage Network for SUB-SD-Z4 | 7d | 2025-12-24 | 2025-12-31 | RHD4ENSDZ4SUBSL170 SS |
| RHD4ENSDZ4SUBRD220 |  | Prepare and Submit Shop Drawings for Road Works( KERBING AND PAVEMENT ) for SUB-SD-Z4 | 9d | 2025-12-24 | 2026-01-03 | RHD4GNPPSD1100 FF, RHD4ENSDZ4SUBEW100, RHD4ENSDZ1SUBSW120 |
| RHD4ENSDZ4SUBSL170 |  | Prepare and Submit Shop Drawings for Street Lighting Network for SUB-SD-Z4 | 7d | 2025-12-24 | 2025-12-31 | RHD4ENSDZ4SUBRD220 SS |
| RHD4ENSDZ4SUBTC190 |  | Prepare and Submit Shop Drawings for Telecommunications Network for SUB-SD-Z4 | 6d | 2025-12-24 | 2025-12-30 | RHD4ENSDZ4SUBLV160 SS |
| RHD4ENSDZ4SUBMV150 |  | Prepare and Submit Shop Drawings for Medium Voltage Network for SUB-SD-Z4 | 6d | 2025-12-28 | 2026-01-03 | RHD4GNPPSD1100, RHD4ENSDZ4SUBIRR140 |
|  | 27 | **RHD4-02-002-Shop Drawing Submittals - SUB-Z5** |  | 2025-12-14 | 2026-01-03 |  |
| RHD4ENSDZ5SUBEW100 |  | Prepare and Submit Shop Drawings for Road Plans and Profile for SUB-SD-Z5 | 6d | 2025-12-14 | 2025-12-20 | RHD4GNPPSoL1100, RHD4GNPPSuv1100, RHD4GNPPSD1100 FF |
| RHD4ENSDZ5SUBPT130 |  | Prepare and Submit Shop Drawings for Potable Water Network for SUB-SD-Z5 | 6d | 2025-12-14 | 2025-12-20 | RHD4ENSDZ5SUBSW120 SS |
| RHD4ENSDZ5SUBST110 |  | Prepare and Submit Shop Drawings for Storm Water Network for SUB-SD-Z5 | 6d | 2025-12-14 | 2025-12-20 | RHD4ENSDZ5SUBEW100 SS |
| RHD4ENSDZ5SUBSW120 |  | Prepare and Submit Shop Drawings for Sewage Network for SUB-SD-Z5 | 7d | 2025-12-14 | 2025-12-21 | RHD4ENSDZ5SUBST110 SS |
| RHD4ENSDZ5SUBCCTV210 |  | Prepare and Submit Shop Drawings for Security Network for SUB-SD-Z5 | 7d | 2025-12-15 | 2025-12-22 | RHD4ENSDZ5SUBICT200 SS |
| RHD4ENSDZ5SUBICT200 |  | Prepare and Submit Shop Drawings for Information and Communication Technologies Network for SUB-SD-Z5 | 7d | 2025-12-15 | 2025-12-22 | RHD4ENSDZ5SUBTC190 SS |
| RHD4ENSDZ5SUBLV160 |  | Prepare and Submit Shop Drawings for Low Voltage Network for SUB-SD-Z5 | 7d | 2025-12-15 | 2025-12-22 | RHD4ENSDZ5SUBSL170 SS |
| RHD4ENSDZ5SUBRD220 |  | Prepare and Submit Shop Drawings for Road Works( KERBING AND PAVEMENT ) for SUB-SD-Z5(Completed) | 7d | 2025-12-15 | 2025-12-22 | RHD4GNPPSD1100 FF, RHD4ENSDZ6SUBRD220 |
| RHD4ENSDZ5SUBSL170 |  | Prepare and Submit Shop Drawings for Street Lighting Network for SUB-SD-Z5 | 7d | 2025-12-15 | 2025-12-22 | RHD4ENSDZ5SUBRD220 SS |
| RHD4ENSDZ5SUBTC190 |  | Prepare and Submit Shop Drawings for Telecommunications Network for SUB-SD-Z5 | 6d | 2025-12-15 | 2025-12-21 | RHD4ENSDZ5SUBLV160 SS |
| RHD4ENSDZ5SUBIRR140 |  | Prepare and Submit Shop Drawings for Irrigation Network for SUB-SD-Z5 | 6d | 2025-12-21 | 2025-12-27 | RHD4ENSDZ5SUBPT130 |
| RHD4ENSDZ5SUBMV150 |  | Prepare and Submit Shop Drawings for Medium Voltage Network for SUB-SD-Z5 | 6d | 2025-12-28 | 2026-01-03 | RHD4GNPPSD1100, RHD4ENSDZ5SUBIRR140 |
|  | 28 | **RHD4-02-002-Shop Drawing Submittals - SUB-Z6** |  | 2025-12-04 | 2026-01-03 |  |
| RHD4ENSDZ6SUBCCTV210 |  | Prepare and Submit Shop Drawings for Security Network for SUB-SD-Z6 | 7d | 2025-12-04 | 2025-12-11 | RHD4ENSDZ6SUBICT200 SS |
| RHD4ENSDZ6SUBICT200 |  | Prepare and Submit Shop Drawings for Information and Communication Technologies Network for SUB-SD-Z6 | 7d | 2025-12-04 | 2025-12-11 | RHD4ENSDZ6SUBTC190 SS |
| RHD4ENSDZ6SUBLV160 |  | Prepare and Submit Shop Drawings for Low Voltage Network for SUB-SD-Z6 | 7d | 2025-12-04 | 2025-12-11 | RHD4ENSDZ6SUBSL170 SS |
| RHD4ENSDZ6SUBRD220 |  | Prepare and Submit Shop Drawings for Road Works( KERBING AND PAVEMENT ) for SUB-SD-Z6 | 9d | 2025-12-04 | 2025-12-14 | RHD4GNPSMIS1000 SS, RHD4GNPPSD1100 FF |
| RHD4ENSDZ6SUBSL170 |  | Prepare and Submit Shop Drawings for Street Lighting Network for SUB-SD-Z6 | 7d | 2025-12-04 | 2025-12-11 | RHD4ENSDZ6SUBRD220 SS |
| RHD4ENSDZ6SUBTC190 |  | Prepare and Submit Shop Drawings for Telecommunications Network for SUB-SD-Z6 | 6d | 2025-12-04 | 2025-12-10 | RHD4ENSDZ6SUBLV160 SS |
| RHD4ENSDZ6SUBEW100 |  | Prepare and Submit Shop Drawings for Road Plans and Profile for SUB-SD-Z6 | 7d | 2025-12-14 | 2025-12-21 | RHD4GNPPSoL1100, RHD4GNPPSuv1100, RHD4GNPPSD1100 FF |
| RHD4ENSDZ6SUBPT130 |  | Prepare and Submit Shop Drawings for Potable Water Network for SUB-SD-Z6 | 6d | 2025-12-14 | 2025-12-20 | RHD4ENSDZ6SUBSW120 SS |
| RHD4ENSDZ6SUBST110 |  | Prepare and Submit Shop Drawings for Storm Water Network for SUB-SD-Z6 | 6d | 2025-12-14 | 2025-12-20 | RHD4ENSDZ6SUBEW100 SS |
| RHD4ENSDZ6SUBSW120 |  | Prepare and Submit Shop Drawings for Sewage Network for SUB-SD-Z6 | 7d | 2025-12-14 | 2025-12-21 | RHD4ENSDZ6SUBST110 SS |
| RHD4ENSDZ6SUBIRR140 |  | Prepare and Submit Shop Drawings for Irrigation Network for SUB-SD-Z6 | 6d | 2025-12-21 | 2025-12-27 | RHD4ENSDZ6SUBPT130 |
| RHD4ENSDZ6SUBMV150 |  | Prepare and Submit Shop Drawings for Medium Voltage Network for SUB-SD-Z6 | 6d | 2025-12-28 | 2026-01-03 | RHD4GNPPSD1100, RHD4ENSDZ6SUBIRR140 |
|  | 29 | **RHD4-02-002-Shop Drawing Submittals - SUB-Z7** |  | 2025-12-14 | 2026-01-03 |  |
| RHD4ENSDZ7SUBEW100 |  | Prepare and Submit Shop Drawings for Road Plans and Profile for SUB-SD-Z7 | 7d | 2025-12-14 | 2025-12-21 | RHD4GNPPSoL1100, RHD4GNPPSuv1100, RHD4GNPPSD1100 FF |
| RHD4ENSDZ7SUBPT130 |  | Prepare and Submit Shop Drawings for Potable Water Network for SUB-SD-Z7 | 6d | 2025-12-14 | 2025-12-20 | RHD4ENSDZ7SUBSW120 SS |
| RHD4ENSDZ7SUBST110 |  | Prepare and Submit Shop Drawings for Storm Water Network for SUB-SD-Z7 | 6d | 2025-12-14 | 2025-12-20 | RHD4ENSDZ7SUBEW100 SS |
| RHD4ENSDZ7SUBSW120 |  | Prepare and Submit Shop Drawings for Sewage Network for SUB-SD-Z7 | 7d | 2025-12-14 | 2025-12-21 | RHD4ENSDZ7SUBST110 SS |
| RHD4ENSDZ7SUBCCTV210 |  | Prepare and Submit Shop Drawings for Security Network for SUB-SD-Z7 | 7d | 2025-12-15 | 2025-12-22 | RHD4ENSDZ7SUBICT200 SS |
| RHD4ENSDZ7SUBICT200 |  | Prepare and Submit Shop Drawings for Information and Communication Technologies Network for SUB-SD-Z7 | 7d | 2025-12-15 | 2025-12-22 | RHD4ENSDZ7SUBTC190 SS |
| RHD4ENSDZ7SUBLV160 |  | Prepare and Submit Shop Drawings for Low Voltage Network for SUB-SD-Z7 | 7d | 2025-12-15 | 2025-12-22 | RHD4ENSDZ7SUBSL170 SS |
| RHD4ENSDZ7SUBRD220 |  | Prepare and Submit Shop Drawings for Road Works( KERBING AND PAVEMENT ) for SUB-SD-Z7(Completed) | 7d | 2025-12-15 | 2025-12-22 | RHD4GNPPSD1100 FF, RHD4ENSDZ6SUBRD220 |
| RHD4ENSDZ7SUBSL170 |  | Prepare and Submit Shop Drawings for Street Lighting Network for SUB-SD-Z7 | 7d | 2025-12-15 | 2025-12-22 | RHD4ENSDZ7SUBRD220 SS |
| RHD4ENSDZ7SUBTC190 |  | Prepare and Submit Shop Drawings for Telecommunications Network for SUB-SD-Z7 | 6d | 2025-12-15 | 2025-12-21 | RHD4ENSDZ7SUBLV160 SS |

| ID | WBS | Task | Duration | Start | Finish | Predecessors |
| --- | --- | --- | --- | --- | --- | --- |
| RHD4ENSDZ7SUBIRR140 |  | Prepare and Submit Shop Drawings for Irrigation Network for SUB-SD-Z7 | 6d | 2025-12-21 | 2025-12-27 | RHD4ENSDZ7SUBPT130 |
| RHD4ENSDZ7SUBMV150 |  | Prepare and Submit Shop Drawings for Medium Voltage Network for SUB-SD-Z7 | 6d | 2025-12-28 | 2026-01-03 | RHD4GNPPSD1100, RHD4ENSDZ7SUBIRR140 |
|  | 30 | **RHD4-02-002-Shop Drawing Submittals - SUB-Z8** |  | 2025-12-14 | 2026-01-11 |  |
| RHD4ENSDZ8SUBEW100 |  | Prepare and Submit Shop Drawings for Road Plans and Profile for SUB-SD-Z8 | 7d | 2025-12-14 | 2025-12-21 | RHD4GNPPSoL1100, RHD4GNPPSuv1100 |
| RHD4ENSDZ8SUBPT130 |  | Prepare and Submit Shop Drawings for Potable Water Network for SUB-SD-Z8 | 6d | 2025-12-22 | 2025-12-28 | RHD4ENSDZ8SUBSW120 SS |
| RHD4ENSDZ8SUBST110 |  | Prepare and Submit Shop Drawings for Storm Water Network for SUB-SD-Z8 | 6d | 2025-12-22 | 2025-12-28 | RHD4ENSDZ8SUBEW100 |
| RHD4ENSDZ8SUBSW120 |  | Prepare and Submit Shop Drawings for Sewage Network for SUB-SD-Z8 | 7d | 2025-12-22 | 2025-12-29 | RHD4ENSDZ8SUBST110 SS |
| RHD4ENSDZ8SUBRD220 |  | Prepare and Submit Shop Drawings for Road Works( KERBING AND PAVEMENT ) for SUB-SD-Z8 | 7d | 2025-12-23 | 2025-12-30 | RHD4ENSDZ3SUBRD220 |
| RHD4ENSDZ8SUBIRR140 |  | Prepare and Submit Shop Drawings for Irrigation Network for SUB-SD-Z8 | 6d | 2025-12-29 | 2026-01-04 | RHD4ENSDZ8SUBPT130 |
| RHD4ENSDZ8SUBCCTV210 |  | Prepare and Submit Shop Drawings for Security Network for SUB-SD-Z8 | 7d | 2025-12-31 | 2026-01-07 | RHD4ENSDZ8SUBICT200 SS |
| RHD4ENSDZ8SUBICT200 |  | Prepare and Submit Shop Drawings for Information and Communication Technologies Network for SUB-SD-Z8 | 7d | 2025-12-31 | 2026-01-07 | RHD4ENSDZ8SUBTC190 SS |
| RHD4ENSDZ8SUBLV160 |  | Prepare and Submit Shop Drawings for Low Voltage Network for SUB-SD-Z8 | 7d | 2025-12-31 | 2026-01-07 | RHD4ENSDZ8SUBSL170 SS |
| RHD4ENSDZ8SUBSL170 |  | Prepare and Submit Shop Drawings for Street Lighting Network for SUB-SD-Z8 | 7d | 2025-12-31 | 2026-01-07 | RHD4ENSDZ8SUBRD220 |
| RHD4ENSDZ8SUBTC190 |  | Prepare and Submit Shop Drawings for Telecommunications Network for SUB-SD-Z8 | 6d | 2025-12-31 | 2026-01-06 | RHD4ENSDZ8SUBLV160 SS |
| RHD4ENSDZ8SUBMV150 |  | Prepare and Submit Shop Drawings for Medium Voltage Network for SUB-SD-Z8 | 6d | 2026-01-05 | 2026-01-11 | RHD4GNPPSD1100, RHD4ENSDZ8SUBIRR140 |
|  | 31 | **RHD4-02-002-Shop Drawing Submittals - SUB-Z9** |  | 2025-12-14 | 2026-01-03 |  |
| RHD4ENSDZ9SUBEW100 |  | Prepare and Submit Shop Drawings for Road Plans and Profile for SUB-SD-Z9 | 7d | 2025-12-14 | 2025-12-21 | RHD4GNPPSoL1100, RHD4GNPPSuv1100, RHD4GNPPSD1100 FF |
| RHD4ENSDZ9SUBPT130 |  | Prepare and Submit Shop Drawings for Potable Water Network for SUB-SD-Z9 | 6d | 2025-12-14 | 2025-12-20 | RHD4ENSDZ9SUBSW120 SS |
| RHD4ENSDZ9SUBST110 |  | Prepare and Submit Shop Drawings for Storm Water Network for SUB-SD-Z9 | 6d | 2025-12-14 | 2025-12-20 | RHD4ENSDZ9SUBEW100 SS |
| RHD4ENSDZ9SUBSW120 |  | Prepare and Submit Shop Drawings for Sewage Network for SUB-SD-Z9 | 7d | 2025-12-14 | 2025-12-21 | RHD4ENSDZ9SUBST110 SS |
| RHD4ENSDZ9SUBCCTV210 |  | Prepare and Submit Shop Drawings for Security Network for SUB-SD-Z9 | 7d | 2025-12-15 | 2025-12-22 | RHD4ENSDZ9SUBICT200 SS |
| RHD4ENSDZ9SUBICT200 |  | Prepare and Submit Shop Drawings for Information and Communication Technologies Network for SUB-SD-Z9 | 7d | 2025-12-15 | 2025-12-22 | RHD4ENSDZ9SUBTC190 SS |
| RHD4ENSDZ9SUBLV160 |  | Prepare and Submit Shop Drawings for Low Voltage Network for SUB-SD-Z9 | 7d | 2025-12-15 | 2025-12-22 | RHD4ENSDZ9SUBSL170 SS |
| RHD4ENSDZ9SUBRD220 |  | Prepare and Submit Shop Drawings for Road Works( KERBING AND PAVEMENT ) for SUB-SD-Z9(Completed) | 7d | 2025-12-15 | 2025-12-22 | RHD4GNPPSD1100 FF, RHD4ENSDZ6SUBRD220 |
| RHD4ENSDZ9SUBSL170 |  | Prepare and Submit Shop Drawings for Street Lighting Network for SUB-SD-Z9 | 7d | 2025-12-15 | 2025-12-22 | RHD4ENSDZ9SUBRD220 SS |
| RHD4ENSDZ9SUBTC190 |  | Prepare and Submit Shop Drawings for Telecommunications Network for SUB-SD-Z9 | 6d | 2025-12-15 | 2025-12-21 | RHD4ENSDZ9SUBLV160 SS |
| RHD4ENSDZ9SUBIRR140 |  | Prepare and Submit Shop Drawings for Irrigation Network for SUB-SD-Z9 | 6d | 2025-12-21 | 2025-12-27 | RHD4ENSDZ9SUBPT130 |
| RHD4ENSDZ9SUBMV150 |  | Prepare and Submit Shop Drawings for Medium Voltage Network for SUB-SD-Z9 | 6d | 2025-12-28 | 2026-01-03 | RHD4GNPPSD1100, RHD4ENSDZ9SUBIRR140 |
|  | 32 | **RHD4-02-002-Shop Drawing Submittals - SUB-Tunne 1 - TUN1** |  | 2025-12-15 | 2026-01-07 |  |
| RHD4ENSDTUN1SUB1100 |  | Prepare and Submit Shop Drawings for TUNNEL 1 (SECTIONS) -Z5 for -TUN1-SUB(Completed) | 7d | 2025-12-15 | 2025-12-22 | RHD4GNPPSD1100 FF, RHD4ENSDZ6SUBRD220 |
| RHD4ENSDTUN1SUB1200 |  | Prepare and Submit Shop Drawings for TUNNEL 1 (BBS) -Z5 for -TUN1-SUB(Completed) | 7d | 2025-12-15 | 2025-12-22 | RHD4GNPPSD1100 FF, RHD4ENSDZ6SUBRD220 |
| RHD4ENSDTUN1SUB1000 |  | Prepare and Submit Shop Drawings for TUNNEL 1 (PLANS) -Z5 for -TUN1-SUB | 7d | 2025-12-31 | 2026-01-07 | RHD4ENSDZ8SUBRD220, RHD4GNPPHSE1100 |
|  | 36 | **RHD4-02-002-Shop Drawing Submittals - SUB-Storm Lift Station 1 - STL1** |  | 2025-12-15 | 2026-01-12 |  |
| RHD4ENSDSTL1SUB2000 |  | Prepare and Submit Shop Drawings for Storm Lift Station 1 - Z5 - Architecture Package for SD-STL1-SUB(Completed) | 7d | 2025-12-15 | 2025-12-22 | RHD4GNPPSD1100 FF, RHD4ENSDZ6SUBRD220 |
| RHD4ENSDSTL1SUB3000 |  | Prepare and Submit Shop Drawings for Storm Lift Station 1 - Z5 - Mechanical Package for SD-STL1-SUB(Completed) | 7d | 2025-12-15 | 2025-12-22 | RHD4GNPPSD1100 FF, RHD4ENSDZ6SUBRD220 |
| RHD4ENSDSTL1SUB1000 |  | Prepare and Submit Shop Drawings for Storm Lift Station 1 - Z5 - Structure Package for SD-STL1-SUB | 12d | 2025-12-16 | 2025-12-29 | RHD4GNMOB1200 |
| RHD4ENSDSTL1SUB4000 |  | Prepare and Submit Shop Drawings for Storm Lift Station 1 - Z5 - Electrical Package for SD-STL1-SUB | 12d | 2025-12-30 | 2026-01-12 | RHD4ENSDSTL1SUB1000 |
|  | 34 | **RHD4-02-002-Shop Drawing Submittals - SUB-Sewage Lift Station 1 - SWL1** |  | 2025-12-15 | 2026-01-25 |  |
| RHD4ENSDSWL1SUB2000 |  | Prepare and Submit Shop Drawings for Sewage Lift Station 1 - Z3 - Architecture Package for -SWL1-SUB(Completed) | 7d | 2025-12-15 | 2025-12-22 | RHD4ENSDSTL1SUB2000 SS, RHD4GNPPSD1100 FF |
| RHD4ENSDSWL1SUB3000 |  | Prepare and Submit Shop Drawings for Sewage Lift Station 1 - Z3 - Mechanical Package for -SWL1-SUB(Completed) | 7d | 2025-12-15 | 2025-12-22 | RHD4ENSDSTL1SUB3000 SS, RHD4GNPPSD1100 FF |
| RHD4ENSDSWL1SUB1000 |  | Prepare and Submit Shop Drawings for Sewage Lift Station 1 - Z3 - Structure Package for -SWL1-SUB | 14.3d | 2025-12-30 | 2026-01-15 | RHD4ENSDSTL1SUB1000 |
| RHD4ENSDSWL1SUB4000 |  | Prepare and Submit Shop Drawings for Sewage Lift Station 1 - Z3 - Electrical Package for -SWL1-SUB | 11d | 2026-01-13 | 2026-01-25 | RHD4ENSDSTL1SUB4000 |
|  | 38 | **RHD4-02-002-Shop Drawing Approvals - APP** |  | 2025-12-04 | 2026-01-28 |  |
|  | 39 | **RHD4-02-002-Shop Drawing Approvals - APP-Z1** |  | 2025-12-21 | 2026-01-18 |  |
| RHD4ENSDZ1APPST110 |  | Review and Approval of Shop Drawings for Storm Water Network for ST-Z1-APP | 7d | 2025-12-21 | 2025-12-28 | RHD4ENSDZ1SUBST110 |
| RHD4ENSDZ1APPSW120 |  | Review and Approval of Shop Drawings for Sewage Network for SW-Z1-APP | 7d | 2025-12-21 | 2025-12-28 | RHD4ENSDZ1SUBSW120 |
| RHD4ENSDZ1APPPT130 |  | Review and Approval of Shop Drawings for Potable Water Network for PT-Z1-APP | 6d | 2025-12-28 | 2026-01-03 | RHD4ENSDZ1SUBPT130 |
| RHD4ENSDZ1APPIRR140 |  | Review and Approval of Shop Drawings for Irrigation Network for IRR-Z1-APP | 7d | 2026-01-04 | 2026-01-11 | RHD4ENSDZ1SUBIRR140 |
| RHD4ENSDZ1APPRD220 |  | Review and Approval of Shop Drawings for Road Works( KERBING AND PAVEMENT ) for RD-Z1-APP | 7d | 2026-01-04 | 2026-01-11 | RHD4ENSDZ1SUBRD220 SS |
| RHD4ENSDZ1APPCCTV210 |  | Review and Approval of Shop Drawings for Security Network for CCTV-Z1-APP | 7d | 2026-01-11 | 2026-01-18 | RHD4ENSDZ1SUBCCTV210 |
| RHD4ENSDZ1APPICT200 |  | Review and Approval of Shop Drawings for Information and Communication Technologies Network for ICT-Z1-APP | 7d | 2026-01-11 | 2026-01-18 | RHD4ENSDZ1SUBICT200 |
| RHD4ENSDZ1APPLV160 |  | Review and Approval of Shop Drawings for Low Voltage Network for LV-Z1-APP | 7d | 2026-01-11 | 2026-01-18 | RHD4ENSDZ1SUBLV160 |
| RHD4ENSDZ1APPSL170 |  | Review and Approval of Shop Drawings for Street Lighting Network for SL-Z1-APP | 7d | 2026-01-11 | 2026-01-18 | RHD4ENSDZ1SUBSL170 |
| RHD4ENSDZ1APPTC190 |  | Review and Approval of Shop Drawings for Telecommunications Network for TC-Z1-APP | 7d | 2026-01-11 | 2026-01-18 | RHD4ENSDZ1APPPT130, RHD4ENSDZ1APPSW120, RHD4ENSDZ1APPST110, RHD4ENSDZ1SUBTC190 |
| RHD4ENSDZ1APPEW100 |  | Review and Approval of Shop Drawings for Road Plans and Profile for EW-Z1-APP | 5d | 2026-01-12 | 2026-01-17 | RHD4ENSDZ1APPRD220, RHD4ENSDZ1SUBEW100, RHD4ENSDZ1APPRD220 FF |
| RHD4ENSDZ1APPMV150 |  | Review and Approval of Shop Drawings for Medium Voltage Network for MV-Z1-APP | 6d | 2026-01-12 | 2026-01-18 | RHD4GNPPSD1100, RHD4ENSDZ4SUBRD220, RHD4ENSDZ1SUBRD220, RHD4ENSDZ1APPIRR140, RHD4ENSDZ1SUBMV150 |
|  | 40 | **RHD4-02-002-Shop Drawing Approvals - APP-Z2** |  | 2025-12-29 | 2026-01-21 |  |
| RHD4ENSDZ2APPST110 |  | Review and Approval of Shop Drawings for Storm Water Network for ST-Z2-APP | 7d | 2025-12-29 | 2026-01-05 | RHD4ENSDZ2SUBST110 |
| RHD4ENSDZ2APPPT130 |  | Review and Approval of Shop Drawings for Potable Water Network for PT-Z2-APP | 6d | 2025-12-30 | 2026-01-05 | RHD4ENSDZ2SUBPT130 |
| RHD4ENSDZ2APPSW120 |  | Review and Approval of Shop Drawings for Sewage Network for SW-Z2-APP | 7d | 2025-12-30 | 2026-01-06 | RHD4ENSDZ2SUBSW120 |
| RHD4ENSDZ2APPRD220 |  | Review and Approval of Shop Drawings for Road Works( KERBING AND PAVEMENT ) for RD-Z2-APP | 7d | 2026-01-04 | 2026-01-11 | RHD4ENSDZ2SUBRD220 SS |
| RHD4ENSDZ2APPIRR140 |  | Review and Approval of Shop Drawings for Irrigation Network for IRR-Z2-APP | 7d | 2026-01-07 | 2026-01-14 | RHD4ENSDZ2SUBIRR140 |
| RHD4ENSDZ2APPTC190 |  | Review and Approval of Shop Drawings for Telecommunications Network for TC-Z2-APP | 7d | 2026-01-11 | 2026-01-18 | RHD4ENSDZ2SUBTC190 |
| RHD4ENSDZ2APPCCTV210 |  | Review and Approval of Shop Drawings for Security Network for CCTV-Z2-APP | 7d | 2026-01-12 | 2026-01-19 | RHD4ENSDZ2APPSW120, RHD4ENSDZ2SUBCCTV210 |
| RHD4ENSDZ2APPEW100 |  | Review and Approval of Shop Drawings for Road Plans and Profile for EW-Z2-APP | 5d | 2026-01-12 | 2026-01-17 | RHD4ENSDZ2APPRD220, RHD4ENSDZ2SUBEW100 SS, RHD4ENSDZ2APPST110 |
| RHD4ENSDZ2APPICT200 |  | Review and Approval of Shop Drawings for Information and Communication Technologies Network for ICT-Z2-APP | 7d | 2026-01-12 | 2026-01-19 | RHD4ENSDZ2APPPT130, RHD4ENSDZ2SUBICT200 |
| RHD4ENSDZ2APPLV160 |  | Review and Approval of Shop Drawings for Low Voltage Network for LV-Z2-APP | 7d | 2026-01-12 | 2026-01-19 | RHD4ENSDZ2SUBLV160 |
| RHD4ENSDZ2APPSL170 |  | Review and Approval of Shop Drawings for Street Lighting Network for SL-Z2-APP | 7d | 2026-01-12 | 2026-01-19 | RHD4ENSDZ2SUBSL170 |
| RHD4ENSDZ2APPMV150 |  | Review and Approval of Shop Drawings for Medium Voltage Network for MV-Z2-APP | 6d | 2026-01-15 | 2026-01-21 | RHD4GNPPSD1100, RHD4ENSDZ4SUBRD220, RHD4ENSDZ2SUBRD220, RHD4ENSDZ2APPIRR140, RHD4ENSDZ2SUBMV150 |
|  | 41 | **RHD4-02-002-Shop Drawing Approvals - APP-Z3** |  | 2025-12-23 | 2026-01-17 |  |

| ID | WBS | Task | Duration | Start | Finish | Predecessors |
| --- | --- | --- | --- | --- | --- | --- |
| RHD4ENSDZ3APPRD220 |  | Review and Approval of Shop Drawings for Road Works( KERBING AND PAVEMENT ) for RD-Z3-APP | 7d | 2025-12-23 | 2025-12-30 | RHD4ENSDZ3SUBRD220 |
| RHD4ENSDZ3APPPT130 |  | Review and Approval of Shop Drawings for Potable Water Network for PT-Z3-APP | 6d | 2025-12-28 | 2026-01-03 | RHD4ENSDZ3SUBPT130 |
| RHD4ENSDZ3APPST110 |  | Review and Approval of Shop Drawings for Storm Water Network for ST-Z3-APP | 7d | 2025-12-28 | 2026-01-04 | RHD4ENSDZ3SUBST110 |
| RHD4ENSDZ3APPSW120 |  | Review and Approval of Shop Drawings for Sewage Network for SW-Z3-APP | 7d | 2025-12-28 | 2026-01-04 | RHD4ENSDZ3SUBSW120 |
| RHD4ENSDZ3APPCCTV210 |  | Review and Approval of Shop Drawings for Security Network for CCTV-Z3-APP | 7d | 2025-12-30 | 2026-01-06 | RHD4ENSDZ3SUBCCTV210 |
| RHD4ENSDZ3APPICT200 |  | Review and Approval of Shop Drawings for Information and Communication Technologies Network for ICT-Z3-APP | 7d | 2025-12-30 | 2026-01-06 | RHD4ENSDZ3SUBICT200 |
| RHD4ENSDZ3APPLV160 |  | Review and Approval of Shop Drawings for Low Voltage Network for LV-Z3-APP | 7d | 2025-12-30 | 2026-01-06 | RHD4ENSDZ3SUBLV160 |
| RHD4ENSDZ3APPSL170 |  | Review and Approval of Shop Drawings for Street Lighting Network for SL-Z3-APP | 7d | 2025-12-30 | 2026-01-06 | RHD4ENSDZ3SUBSL170 |
| RHD4ENSDZ3APPTC190 |  | Review and Approval of Shop Drawings for Telecommunications Network for TC-Z3-APP | 7d | 2025-12-30 | 2026-01-06 | RHD4ENSDZ3SUBTC190 |
| RHD4ENSDZ3APPEW100 |  | Review and Approval of Shop Drawings for Road Plans and Profile for EW-Z3-APP | 5d | 2025-12-31 | 2026-01-05 | RHD4ENSDZ3APPRD220, RHD4ENSDZ3SUBEW100 |
| RHD4ENSDZ3APPIRR140 |  | Review and Approval of Shop Drawings for Irrigation Network for IRR-Z3-APP | 7d | 2026-01-04 | 2026-01-11 | RHD4ENSDZ3APPPT130, RHD4ENSDZ3SUBIRR140 |
| RHD4ENSDZ3APPMV150 |  | Review and Approval of Shop Drawings for Medium Voltage Network for MV-Z3-APP | 6d | 2026-01-11 | 2026-01-17 | RHD4ENSDZ3APPEW100, RHD4ENSDZ3APPCCTV210, RHD4ENSDZ3APPICT200, RHD4ENSDZ3APPTC190, RHD4ENSDZ3APPSL170, RHD4ENSDZ3APPLV160, RHD4ENSDZ3APPSW120, RHD4ENSDZ3APPST110, RHD4ENSDZ3SUBMV150 |
|  | 42 | **RHD4-02-002-Shop Drawing Approvals - APP-Z4** |  | 2025-12-14 | 2026-01-10 |  |
| RHD4ENSDZ4APPEW100 |  | Review and Approval of Shop Drawings for Road Plans and Profile for EW-Z4-APP | 5d | 2025-12-14 | 2025-12-18 | RHD4ENSDZ4SUBEW100 SS |
| RHD4ENSDZ4APPPT130 |  | Review and Approval of Shop Drawings for Potable Water Network for PT-Z4-APP | 6d | 2025-12-21 | 2025-12-27 | RHD4ENSDZ4SUBPT130 |
| RHD4ENSDZ4APPST110 |  | Review and Approval of Shop Drawings for Storm Water Network for ST-Z4-APP | 7d | 2025-12-21 | 2025-12-28 | RHD4ENSDZ4SUBST110 |
| RHD4ENSDZ4APPSW120 |  | Review and Approval of Shop Drawings for Sewage Network for SW-Z4-APP | 7d | 2025-12-22 | 2025-12-29 | RHD4ENSDZ4SUBSW120 |
| RHD4ENSDZ4APPRD220 |  | Review and Approval of Shop Drawings for Road Works( KERBING AND PAVEMENT ) for RD-Z4-APP | 7d | 2025-12-24 | 2025-12-31 | RHD4ENSDZ4SUBRD220 SS |
| RHD4ENSDZ4APPIRR140 |  | Review and Approval of Shop Drawings for Irrigation Network for IRR-Z4-APP | 7d | 2025-12-28 | 2026-01-04 | RHD4ENSDZ4SUBIRR140 |
| RHD4ENSDZ4APPTC190 |  | Review and Approval of Shop Drawings for Telecommunications Network for TC-Z4-APP | 7d | 2025-12-31 | 2026-01-07 | RHD4ENSDZ4SUBTC190 |
| RHD4ENSDZ4APPCCTV210 |  | Review and Approval of Shop Drawings for Security Network for CCTV-Z4-APP | 7d | 2026-01-01 | 2026-01-08 | RHD4ENSDZ4SUBCCTV210 |
| RHD4ENSDZ4APPICT200 |  | Review and Approval of Shop Drawings for Information and Communication Technologies Network for ICT-Z4-APP | 7d | 2026-01-01 | 2026-01-08 | RHD4ENSDZ4SUBICT200 |
| RHD4ENSDZ4APPLV160 |  | Review and Approval of Shop Drawings for Low Voltage Network for LV-Z4-APP | 7d | 2026-01-01 | 2026-01-08 | RHD4ENSDZ4SUBLV160 |
| RHD4ENSDZ4APPSL170 |  | Review and Approval of Shop Drawings for Street Lighting Network for SL-Z4-APP | 7d | 2026-01-01 | 2026-01-08 | RHD4ENSDZ4SUBSL170 |
| RHD4ENSDZ4APPMV150 |  | Review and Approval of Shop Drawings for Medium Voltage Network for MV-Z4-APP | 6d | 2026-01-04 | 2026-01-10 | RHD4ENSDZ4APPRD220, RHD4ENSDZ4APPSW120, RHD4ENSDZ4APPPT130, RHD4ENSDZ4APPST110, RHD4ENSDZ4SUBMV150 |
|  | 43 | **RHD4-02-002-Shop Drawing Approvals - APP-Z5** |  | 2025-12-15 | 2026-01-10 |  |
| RHD4ENSDZ5APPRD220 |  | Review and Approval of Shop Drawings for Road Works( KERBING AND PAVEMENT ) for RD-Z5-APP | 7d | 2025-12-15 | 2025-12-22 | RHD4ENSDZ5SUBRD220 SS |
| RHD4ENSDZ5APPEW100 |  | Review and Approval of Shop Drawings for Road Plans and Profile for EW-Z5-APP | 5d | 2025-12-21 | 2025-12-25 | RHD4ENSDZ5SUBEW100 |
| RHD4ENSDZ5APPPT130 |  | Review and Approval of Shop Drawings for Potable Water Network for PT-Z5-APP | 6d | 2025-12-21 | 2025-12-27 | RHD4ENSDZ5SUBPT130 |
| RHD4ENSDZ5APPST110 |  | Review and Approval of Shop Drawings for Storm Water Network for ST-Z5-APP | 7d | 2025-12-21 | 2025-12-28 | RHD4ENSDZ5SUBST110 |
| RHD4ENSDZ5APPSW120 |  | Review and Approval of Shop Drawings for Sewage Network for SW-Z5-APP | 7d | 2025-12-22 | 2025-12-29 | RHD4ENSDZ5SUBSW120 |
| RHD4ENSDZ5APPTC190 |  | Review and Approval of Shop Drawings for Telecommunications Network for TC-Z5-APP | 7d | 2025-12-22 | 2025-12-29 | RHD4ENSDZ5SUBTC190 |
| RHD4ENSDZ5APPCCTV210 |  | Review and Approval of Shop Drawings for Security Network for CCTV-Z5-APP | 7d | 2025-12-23 | 2025-12-30 | RHD4ENSDZ5SUBCCTV210 |
| RHD4ENSDZ5APPICT200 |  | Review and Approval of Shop Drawings for Information and Communication Technologies Network for ICT-Z5-APP | 7d | 2025-12-23 | 2025-12-30 | RHD4ENSDZ5SUBICT200 |
| RHD4ENSDZ5APPLV160 |  | Review and Approval of Shop Drawings for Low Voltage Network for LV-Z5-APP | 7d | 2025-12-23 | 2025-12-30 | RHD4ENSDZ5SUBLV160 |
| RHD4ENSDZ5APPSL170 |  | Review and Approval of Shop Drawings for Street Lighting Network for SL-Z5-APP | 7d | 2025-12-23 | 2025-12-30 | RHD4ENSDZ5SUBSL170 |
| RHD4ENSDZ5APPIRR140 |  | Review and Approval of Shop Drawings for Irrigation Network for IRR-Z5-APP | 7d | 2025-12-28 | 2026-01-04 | RHD4ENSDZ5APPPT130, RHD4ENSDZ5SUBIRR140 |
| RHD4ENSDZ5APPMV150 |  | Review and Approval of Shop Drawings for Medium Voltage Network for MV-Z5-APP | 6d | 2026-01-04 | 2026-01-10 | RHD4GNPPSD1100, RHD4ENSDZ6SUBRD220, RHD4ENSDZ5SUBRD220, RHD4ENSDZ5APPST110, RHD4ENSDZ5APPSW120, RHD4ENSDZ5APPTC190, RHD4ENSDZ5APPLV160, RHD4ENSDZ5APPSL170, RHD4ENSDZ5APPICT200, RHD4ENSDZ5APPCCTV210, RHD4ENSDZ5SUBMV150 |
|  | 44 | **RHD4-02-002-Shop Drawing Approvals - APP-Z6** |  | 2025-12-04 | 2026-01-11 |  |
| RHD4ENSDZ6APPRD220 |  | Review and Approval of Shop Drawings for Road Works( KERBING AND PAVEMENT ) for RD-Z6-APP | 7d | 2025-12-04 | 2025-12-11 | RHD4ENSDZ6SUBRD220 SS |
| RHD4ENSDZ6APPTC190 |  | Review and Approval of Shop Drawings for Telecommunications Network for TC-Z6-APP | 7d | 2025-12-11 | 2025-12-18 | RHD4ENSDZ6SUBTC190 |
| RHD4ENSDZ6APPCCTV210 |  | Review and Approval of Shop Drawings for Security Network for CCTV-Z6-APP | 7d | 2025-12-13 | 2025-12-20 | RHD4ENSDZ6SUBCCTV210 |
| RHD4ENSDZ6APPICT200 |  | Review and Approval of Shop Drawings for Information and Communication Technologies Network for ICT-Z6-APP | 7d | 2025-12-13 | 2025-12-20 | RHD4ENSDZ6SUBICT200 |
| RHD4ENSDZ6APPLV160 |  | Review and Approval of Shop Drawings for Low Voltage Network for LV-Z6-APP | 7d | 2025-12-13 | 2025-12-20 | RHD4ENSDZ6SUBLV160 |
| RHD4ENSDZ6APPSL170 |  | Review and Approval of Shop Drawings for Street Lighting Network for SL-Z6-APP | 7d | 2025-12-13 | 2025-12-20 | RHD4ENSDZ6SUBSL170 |
| RHD4ENSDZ6APPPT130 |  | Review and Approval of Shop Drawings for Potable Water Network for PT-Z6-APP | 7d | 2025-12-21 | 2025-12-28 | RHD4ENSDZ6SUBPT130 |
| RHD4ENSDZ6APPST110 |  | Review and Approval of Shop Drawings for Storm Water Network for ST-Z6-APP | 7d | 2025-12-21 | 2025-12-28 | RHD4ENSDZ6SUBST110 |
| RHD4ENSDZ6APPEW100 |  | Review and Approval of Shop Drawings for Road Plans and Profile for EW-Z6-APP | 7d | 2025-12-22 | 2025-12-29 | RHD4ENSDZ6APPRD220, RHD4ENSDZ6SUBEW100 |
| RHD4ENSDZ6APPSW120 |  | Review and Approval of Shop Drawings for Sewage Network for SW-Z6-APP | 7d | 2025-12-22 | 2025-12-29 | RHD4ENSDZ6SUBSW120 |
| RHD4ENSDZ6APPIRR140 |  | Review and Approval of Shop Drawings for Irrigation Network for IRR-Z6-APP | 7d | 2025-12-28 | 2026-01-04 | RHD4ENSDZ6SUBIRR140 |
| RHD4ENSDZ6APPMV150 |  | Review and Approval of Shop Drawings for Medium Voltage Network for MV-Z6-APP | 7d | 2026-01-04 | 2026-01-11 | RHD4ENSDZ6APPSW120, RHD4ENSDZ6APPPT130, RHD4ENSDZ6APPST110, RHD4ENSDZ6SUBMV150 |
|  | 45 | **RHD4-02-002-Shop Drawing Approvals - APP-Z7** |  | 2025-12-15 | 2026-01-11 |  |
| RHD4ENSDZ7APPRD220 |  | Review and Approval of Shop Drawings for Road Works( KERBING AND PAVEMENT ) for RD-Z7-APP | 7d | 2025-12-15 | 2025-12-22 | RHD4ENSDZ7SUBRD220 SS |
| RHD4ENSDZ7APPPT130 |  | Review and Approval of Shop Drawings for Potable Water Network for PT-Z7-APP | 7d | 2025-12-21 | 2025-12-28 | RHD4ENSDZ7SUBPT130 |
| RHD4ENSDZ7APPST110 |  | Review and Approval of Shop Drawings for Storm Water Network for ST-Z7-APP | 7d | 2025-12-21 | 2025-12-28 | RHD4ENSDZ7SUBST110 |
| RHD4ENSDZ7APPEW100 |  | Review and Approval of Shop Drawings for Road Plans and Profile for EW-Z7-APP | 7d | 2025-12-22 | 2025-12-29 | RHD4ENSDZ7SUBEW100 |
| RHD4ENSDZ7APPSW120 |  | Review and Approval of Shop Drawings for Sewage Network for SW-Z7-APP | 7d | 2025-12-22 | 2025-12-29 | RHD4ENSDZ7SUBSW120 |
| RHD4ENSDZ7APPTC190 |  | Review and Approval of Shop Drawings for Telecommunications Network for TC-Z7-APP | 7d | 2025-12-22 | 2025-12-29 | RHD4ENSDZ7SUBTC190 |
| RHD4ENSDZ7APPCCTV210 |  | Review and Approval of Shop Drawings for Security Network for CCTV-Z7-APP | 7d | 2025-12-23 | 2025-12-30 | RHD4ENSDZ7SUBCCTV210 |
| RHD4ENSDZ7APPICT200 |  | Review and Approval of Shop Drawings for Information and Communication Technologies Network for ICT-Z7-APP | 7d | 2025-12-23 | 2025-12-30 | RHD4ENSDZ7SUBICT200 |
| RHD4ENSDZ7APPLV160 |  | Review and Approval of Shop Drawings for Low Voltage Network for LV-Z7-APP | 7d | 2025-12-23 | 2025-12-30 | RHD4ENSDZ7SUBLV160 |
| RHD4ENSDZ7APPSL170 |  | Review and Approval of Shop Drawings for Street Lighting Network for SL-Z7-APP | 7d | 2025-12-23 | 2025-12-30 | RHD4ENSDZ7SUBSL170 |
| RHD4ENSDZ7APPIRR140 |  | Review and Approval of Shop Drawings for Irrigation Network for IRR-Z7-APP | 7d | 2025-12-28 | 2026-01-04 | RHD4ENSDZ7SUBIRR140 |
| RHD4ENSDZ7APPMV150 |  | Review and Approval of Shop Drawings for Medium Voltage Network for MV-Z7-APP | 7d | 2026-01-04 | 2026-01-11 | RHD4GNPPSD1100, RHD4ENSDZ6SUBRD220, RHD4ENSDZ7SUBRD220, RHD4ENSDZ7APPST110, RHD4ENSDZ7APPPT130, RHD4ENSDZ7APPSW120, RHD4ENSDZ7APPTC190, RHD4ENSDZ7APPLV160, RHD4ENSDZ7APPSL170, RHD4ENSDZ7APPICT200, RHD4ENSDZ7APPCCTV210, RHD4ENSDZ7SUBMV150 |
|  | 46 | **RHD4-02-002-Shop Drawing Approvals - APP-Z8** |  | 2025-12-29 | 2026-01-19 |  |
| RHD4ENSDZ8APPPT130 |  | Review and Approval of Shop Drawings for Potable Water Network for PT-Z8-APP | 7d | 2025-12-29 | 2026-01-05 | RHD4ENSDZ8SUBPT130 |
| RHD4ENSDZ8APPST110 |  | Review and Approval of Shop Drawings for Storm Water Network for ST-Z8-APP | 7d | 2025-12-29 | 2026-01-05 | RHD4ENSDZ8SUBST110 |
| RHD4ENSDZ8APPSW120 |  | Review and Approval of Shop Drawings for Sewage Network for SW-Z8-APP | 7d | 2025-12-30 | 2026-01-06 | RHD4ENSDZ8SUBSW120 |
| RHD4ENSDZ8APPRD220 |  | Review and Approval of Shop Drawings for Road Works( KERBING AND PAVEMENT ) for RD-Z8-APP | 7d | 2025-12-31 | 2026-01-07 | RHD4ENSDZ8SUBRD220 |
| RHD4ENSDZ8APPIRR140 |  | Review and Approval of Shop Drawings for Irrigation Network for IRR-Z8-APP | 7d | 2026-01-05 | 2026-01-12 | RHD4ENSDZ7APPIRR140, RHD4ENSDZ8SUBIRR140 |

| ID | WBS | Task | Duration | Start | Finish | Predecessors |
| --- | --- | --- | --- | --- | --- | --- |
| RHD4ENSDZ8APPTC190 |  | Review and Approval of Shop Drawings for Telecommunications Network for TC-Z8-APP | 7d | 2026-01-07 | 2026-01-14 | RHD4ENSDZ8SUBTC190 |
| RHD4ENSDZ8APPEW100 |  | Review and Approval of Shop Drawings for Road Plans and Profile for EW-Z8-APP | 7d | 2026-01-08 | 2026-01-15 | RHD4ENSDZ8APPRD220, RHD4ENSDZ8APPSW120, RHD4ENSDZ8SUBEW100 |
| RHD4ENSDZ8APPICT200 |  | Review and Approval of Shop Drawings for Information and Communication Technologies Network for ICT-Z8-APP | 7d | 2026-01-08 | 2026-01-15 | RHD4ENSDZ5APPIRR140, RHD4ENSDZ4APPTC190, RHD4ENSDZ8SUBICT200 |
| RHD4ENSDZ8APPLV160 |  | Review and Approval of Shop Drawings for Low Voltage Network for LV-Z8-APP | 7d | 2026-01-08 | 2026-01-15 | RHD4ENSDZ6APPIRR140, RHD4ENSDZ4APPIRR140, RHD4ENSDZ8SUBLV160 |
| RHD4ENSDZ8APPSL170 |  | Review and Approval of Shop Drawings for Street Lighting Network for SL-Z8-APP | 7d | 2026-01-08 | 2026-01-15 | RHD4ENSDZ8SUBSL170 |
| RHD4ENSDZ8APPCCTV210 |  | Review and Approval of Shop Drawings for Security Network for CCTV-Z8-APP | 7d | 2026-01-12 | 2026-01-19 | RHD4ENSDZ7APPMV150, RHD4ENSDZ6APPMV150, RHD4ENSDZ4APPMV150, RHD4ENSDZ4APPSL170, RHD4ENSDZ4APPLV160, RHD4ENSDZ3APPIRR140, RHD4ENSDZ8SUBCCTV210 |
| RHD4ENSDZ8APPMV150 |  | Review and Approval of Shop Drawings for Medium Voltage Network for MV-Z8-APP | 7d | 2026-01-12 | 2026-01-19 | RHD4ENSDZ8APPPT130, RHD4ENSDZ8APPST110, RHD4ENSDZ5APPMV150, RHD4ENSDZ4APPCCTV210, RHD4ENSDZ4APPICT200, RHD4ENSDZ8SUBMV150 |
|  | 47 | **RHD4-02-002-Shop Drawing Approvals - APP-Z9** |  | 2025-12-15 | 2026-01-11 |  |
| RHD4ENSDZ9APPRD220 |  | Review and Approval of Shop Drawings for Road Works( KERBING AND PAVEMENT ) for RD-Z9-APP | 7d | 2025-12-15 | 2025-12-22 | RHD4ENSDZ9SUBRD220 SS |
| RHD4ENSDZ9APPPT130 |  | Review and Approval of Shop Drawings for Potable Water Network for PT-Z9-APP | 7d | 2025-12-21 | 2025-12-28 | RHD4ENSDZ9SUBPT130 |
| RHD4ENSDZ9APPST110 |  | Review and Approval of Shop Drawings for Storm Water Network for ST-Z9-APP | 7d | 2025-12-21 | 2025-12-28 | RHD4ENSDZ9SUBST110 |
| RHD4ENSDZ9APPEW100 |  | Review and Approval of Shop Drawings for Road Plans and Profile for EW-Z9-APP | 7d | 2025-12-22 | 2025-12-29 | RHD4ENSDZ9SUBEW100 |
| RHD4ENSDZ9APPSW120 |  | Review and Approval of Shop Drawings for Sewage Network for SW-Z9-APP | 7d | 2025-12-22 | 2025-12-29 | RHD4ENSDZ9SUBSW120 |
| RHD4ENSDZ9APPTC190 |  | Review and Approval of Shop Drawings for Telecommunications Network for TC-Z9-APP | 7d | 2025-12-22 | 2025-12-29 | RHD4ENSDZ9SUBTC190 |
| RHD4ENSDZ9APPCCTV210 |  | Review and Approval of Shop Drawings for Security Network for CCTV-Z9-APP | 7d | 2025-12-23 | 2025-12-30 | RHD4ENSDZ9SUBCCTV210 |
| RHD4ENSDZ9APPICT200 |  | Review and Approval of Shop Drawings for Information and Communication Technologies Network for ICT-Z9-APP | 7d | 2025-12-23 | 2025-12-30 | RHD4ENSDZ9SUBICT200 |
| RHD4ENSDZ9APPLV160 |  | Review and Approval of Shop Drawings for Low Voltage Network for LV-Z9-APP | 7d | 2025-12-23 | 2025-12-30 | RHD4ENSDZ9SUBLV160 |
| RHD4ENSDZ9APPSL170 |  | Review and Approval of Shop Drawings for Street Lighting Network for SL-Z9-APP | 7d | 2025-12-23 | 2025-12-30 | RHD4ENSDZ9SUBSL170 |
| RHD4ENSDZ9APPIRR140 |  | Review and Approval of Shop Drawings for Irrigation Network for IRR-Z9-APP | 7d | 2025-12-28 | 2026-01-04 | RHD4ENSDZ9SUBIRR140 |
| RHD4ENSDZ9APPMV150 |  | Review and Approval of Shop Drawings for Medium Voltage Network for MV-Z9-APP | 7d | 2026-01-04 | 2026-01-11 | RHD4GNPPSD1100, RHD4ENSDZ6SUBRD220, RHD4ENSDZ9SUBRD220, RHD4ENSDZ9APPLV160, RHD4ENSDZ9APPTC190, RHD4ENSDZ9APPSW120, RHD4ENSDZ9APPPT130, RHD4ENSDZ9APPST110, RHD4ENSDZ9SUBMV150 |
|  | 48 | **RHD4-02-002-Shop Drawing Approvals - APP-Tunne 1 - TUN1** |  | 2025-12-15 | 2026-01-15 |  |
| RHD4ENTUN1APPSTC1100 |  | Review and Approval of Shop Drawings for TUNNEL 1 (SECTIONS) -Z5 for STC-TUN1-APP(Completed) | 7d | 2025-12-15 | 2025-12-22 | RHD4ENSDTUN1SUB1100 SS |
| RHD4ENTUN1APPSTC1200 |  | Review and Approval of Shop Drawings for TUNNEL 1 (BBS) -Z5 for STC-TUN1-APP(Completed) | 7d | 2025-12-15 | 2025-12-22 | RHD4ENSDTUN1SUB1200 SS |
| RHD4ENTUN1APPSTC1000 |  | Review and Approval of Shop Drawings for TUNNEL 1 (PLANS) -Z5 for STC-TUN1-APP | 7d | 2026-01-08 | 2026-01-15 | RHD4ENSDZ9APPICT200, RHD4ENSDTUN1SUB1000 |
|  | 50 | **RHD4-02-002-Shop Drawing Approvals - APP-Sewage Lift Station 1 - SWL1** |  | 2025-12-15 | 2026-01-28 |  |
| RHD4ENSWL1APPARC1100 |  | Review and Approval of Shop Drawings for Sewage Lift Station 1 - Z3 - Architecture Package for ARC-SWL1-APP(Completed) | 7d | 2025-12-15 | 2025-12-22 | RHD4ENSDSWL1SUB2000 SS |
| RHD4ENSWL1APPMEC1200 |  | Review and Approval of Shop Drawings for Sewage Lift Station 1 - Z3 - Mechanical Package for MEC-SWL1-APP(Completed) | 7d | 2025-12-15 | 2025-12-22 | RHD4ENSDSWL1SUB3000 SS |
| RHD4ENSWL1APPSTC1000 |  | Review and Approval of Shop Drawings for Sewage Lift Station 1 - Z3 - Structure Package for STC-SWL1-APP | 7d | 2026-01-15 | 2026-01-24 | RHD4ENSDZ9APPMV150, RHD4ENSDZ9APPIRR140, RHD4ENSDZ9APPCCTV210, RHD4ENSDZ9APPSL170, RHD4ENSDZ8APPTC190, RHD4ENSDZ8APPIRR140, RHD4ENSDSWL1SUB1000 |
| RHD4ENSWL1APPELE1300 |  | Review and Approval of Shop Drawings for Sewage Lift Station 1 - Z3 - Electrical Package for ELE-SWL1-APP | 3d | 2026-01-26 | 2026-01-28 | RHD4ENSWL1APPSTC1000, RHD4ENTUN1APPSTC1000, RHD4ENSDZ8APPMV150, RHD4ENSDZ8APPCCTV210, RHD4ENSDZ8APPICT200, RHD4ENSDZ8APPSL170, RHD4ENSDZ8APPLV160, RHD4ENSDZ3APPMV150, RHD4ENSDZ2APPMV150, RHD4ENSDZ2APPCCTV210, RHD4ENSDZ2APPICT200, RHD4ENSDZ2APPSL170, RHD4ENSDZ2APPLV160, RHD4ENSDZ2APPTC190, RHD4ENSDZ1APPMV150, RHD4ENSDZ1APPEW100, RHD4ENSDZ1APPCCTV210, RHD4ENSDZ1APPICT200, RHD4ENSDZ1APPTC190, RHD4ENSDZ1APPSL170, RHD4ENSDZ1APPLV160, RHD4ENSDSWL1SUB4000 |
|  | 52 | **RHD4-02-002-Shop Drawing Approvals - APP-Storm Lift Station 1 - STL1** |  | 2025-12-15 | 2026-01-15 |  |
| RHD4ENSTL1APPARC1100 |  | Review and Approval of Shop Drawings for Storm Lift Station 1 - Z5 - Architecture Package for ARC-STL1-APP(Completed) | 7d | 2025-12-15 | 2025-12-22 | RHD4ENSDSTL1SUB2000 SS |
| RHD4ENSTL1APPMEC1200 |  | Review and Approval of Shop Drawings for Storm Lift Station 1 - Z5 - Mechanical Package for MEC-STL1-APP(Completed) | 7d | 2025-12-15 | 2025-12-22 | RHD4ENSDSTL1SUB3000 SS |
| RHD4ENSTL1APPSTC1000 |  | Review and Approval of Shop Drawings for Storm Lift Station 1 - Z5 - Structure Package for STC-STL1-APP | 7d | 2025-12-30 | 2026-01-06 | RHD4ENSDSTL1SUB1000 |
| RHD4ENSTL1APPELE1300 |  | Review and Approval of Shop Drawings for Storm Lift Station 1 - Z5 - Electrical Package for ELE-STL1-APP | 3d | 2026-01-13 | 2026-01-15 | RHD4ENSTL1APPSTC1000, RHD4ENSDSTL1SUB4000 |
|  | 54 | **RHD4-02-002-Prequalification and Material - MAR** |  | 2025-12-13 | 2026-01-28 |  |
|  | 55 | **RHD4-02-002-Submittals of Material and Prequalifications - SUB** |  | 2025-12-13 | 2026-01-24 |  |
|  | 1 | **RHD4-02-002-Submittals of Material and Prequalifications - SUB-Earth works Material - EW** |  | 2026-01-13 | 2026-01-19 |  |
| RHD4ENMARSUBEW100 |  | Prepare Material Submittal for Earth work Materials - MAR-EW | 6d | 2026-01-13 | 2026-01-19 | RHD4ENSDSTL1SUB4000, RHD4GNPPPMP1100, RHD4GNPPORG1100, RHD4GNPPLOG1100, RHD4GNPPHSE1100 |
|  | 56 | **RHD4-02-002-Submittals of Material and Prequalifications - SUB-Storm Network - ST** |  | 2025-12-16 | 2026-01-15 |  |
| RHD4ENMARSUBST100 |  | Prepare Material Submittal for GRP pipes - MAR-ST | 6d | 2025-12-16 | 2025-12-22 | RHD4ENMSEW2000, RHD4ENSDZ6SUBRD220, RHD4GNMOB1000, RHD4ENMSRD1000 |
| RHD4ENMARSUBST200 |  | Prepare Material Submittal for UPVC pipes - MAR-ST | 7d | 2025-12-16 | 2025-12-23 | RHD4ENMARSUBST100 SS |
| RHD4ENMARSUBST400 |  | Prepare Material Submittal for Catch basin - MAR-ST | 7d | 2025-12-24 | 2025-12-31 | RHD4ENMARSUBST200 |
| RHD4ENMARSUBST300 |  | Prepare Material Submittal for HDPE pipes - MAR-ST | 7d | 2026-01-01 | 2026-01-08 | RHD4ENMARSUBST400 |
| RHD4ENMARSUBST700 |  | Prepare Material Submittal for Precast Concrete - MAR-ST | 7d | 2026-01-04 | 2026-01-11 | RHD4ENMSASPH1000 |
| RHD4ENMARSUBST500 |  | Prepare Material Submittal for Grouted Riprap - MAR-ST | 3d | 2026-01-10 | 2026-01-12 | RHD4ENMARSUBST300 |
| RHD4ENMARSUBST600 |  | Prepare Material Submittal for Tensile reinforcement steel - MAR-ST | 6d | 2026-01-10 | 2026-01-15 | RHD4ENMARSUBST500 SS |
| RHD4ENMARSUBST800 |  | Prepare Material Submittal for Metal Works (Stairs - Manhole Covers) - MAR-ST | 4d | 2026-01-12 | 2026-01-15 | RHD4ENMARSUBST700 |
|  | 57 | **RHD4-02-002-Submittals of Material and Prequalifications - SUB-Sewage Network - SW** |  | 2025-12-23 | 2026-01-20 |  |
| RHD4ENMARSUBSW200 |  | Prepare Material Submittal for GRP pipes - MAR-SW | 6d | 2025-12-23 | 2025-12-29 | RHD4ENMARSUBST100 |
| RHD4ENMARSUBSW100 |  | Prepare Material Submittal for UPVC pipes - MAR-SW | 7d | 2025-12-30 | 2026-01-06 | RHD4ENMARSUBSW200, RHD4GNPPBL1100, RHD4GNPPLOG1100 |
| RHD4ENMARSUBSW300 |  | Prepare Material Submittal for Valves - MAR-SW | 6d | 2025-12-30 | 2026-01-05 | RHD4ENMARSUBSW200 |
| RHD4ENMARSUBSW400 |  | Prepare Material Submittal for Precast Concrete - MAR-SW | 6d | 2026-01-06 | 2026-01-12 | RHD4ENMARSUBSW300 |
| RHD4ENMARSUBSW500 |  | Prepare Material Submittal for Metal Works (Stairs - Manhole Covers) - MAR-SW | 7d | 2026-01-13 | 2026-01-20 | RHD4ENMARSUBSW400 |
| RHD4ENMARSUBSW600 |  | Prepare Material Submittal for HDPE pipes - MAR-SW | 6d | 2026-01-13 | 2026-01-19 | RHD4ENMARSUBSW400 |
|  | 58 | **RHD4-02-002-Submittals of Material and Prequalifications - SUB-Potable Water Network - PT** |  | 2025-12-16 | 2026-01-14 |  |
| RHD4ENMARSUBPT300 |  | Prepare Material Submittal for Fire Hydrants - MAR-PT | 6d | 2025-12-16 | 2025-12-22 | RHD4GNMOB1000 |
| RHD4ENMARSUBPT400 |  | Prepare Material Submittal for Precast Concrete - MAR-PT | 6d | 2025-12-23 | 2025-12-29 | RHD4ENMARSUBPT300 |
| RHD4ENMARSUBPT600 |  | Prepare Material Submittal for Metal Works (Chamber's Covers) - MAR-PT(Completed) | 6d | 2025-12-23 | 2025-12-29 | RHD4ENMARSUBPT400 SS |
| RHD4ENMARSUBPT100 |  | Prepare Material Submittal for HDPE pipes - MAR-PT | 6d | 2026-01-01 | 2026-01-07 | RHD4ENMARSUBST300 SS |
| RHD4ENMARSUBPT200 |  | Prepare Material Submittal for Valves - MAR-PT | 6d | 2026-01-08 | 2026-01-14 | RHD4ENMARSUBPT100 |
| RHD4ENMARSUBPT500 |  | Prepare Material Submittal for Stem and Surface box - MAR-PT | 6d | 2026-01-08 | 2026-01-14 | RHD4GNPPMAT1100 SS, RHD4ENMARSUBPT200 SS |
|  | 59 | **RHD4-02-002-Submittals of Material and Prequalifications - SUB-Irrigation Network - IRR** |  | 2025-12-16 | 2026-01-17 |  |
| RHD4ENMARSUBIRR300 |  | Prepare Material Submittal for Precast Concrete - MAR-IRR | 6d | 2025-12-16 | 2025-12-22 | RHD4GNMOB1200 |
| RHD4ENMARSUBIRR500 |  | Prepare Material Submittal for Metal Works (Chamber's Covers) - MAR-IRR(Completed) | 7d | 2025-12-23 | 2025-12-30 | RHD4ENMARSUBIRR300 |
| RHD4ENMARSUBIRR100 |  | Prepare Material Submittal for HDPE pipes - MAR-IRR | 7d | 2026-01-01 | 2026-01-08 | RHD4ENMARSUBPT100 SS |
| RHD4ENMARSUBIRR200 |  | Prepare Material Submittal for Valves - MAR-IRR | 7d | 2026-01-10 | 2026-01-17 | RHD4ENMARSUBIRR100 |
| RHD4ENMARSUBIRR400 |  | Prepare Material Submittal for Stem and Surface box - MAR-IRR | 6d | 2026-01-10 | 2026-01-15 | RHD4GNPPMAT1100, RHD4ENMARSUBIRR200 SS |
|  | 60 | **RHD4-02-002-Submittals of Material and Prequalifications - SUB-Medium Voltage - MV** |  | 2025-12-16 | 2026-01-06 |  |
| RHD4ENMARSUBMV100 |  | Prepare Material Submittal for UPVC Pipes for Duct Banks - MAR-MV | 7d | 2025-12-16 | 2025-12-23 | RHD4GNMOB1000 |
| RHD4ENMARSUBMV600 |  | Prepare Material Submittal for Unit Substations - MAR-MV | 6d | 2025-12-24 | 2025-12-30 | RHD4GNPPMAT1100, RHD4ENMARSUBMV100 |

| ID | WBS | Task | Duration | Start | Finish | Predecessors |
| --- | --- | --- | --- | --- | --- | --- |
| RHD4ENMARSUBMV700 |  | Prepare Material Submittal for Ring Main Unit (RMU) - MAR-MV | 6d | 2025-12-24 | 2025-12-30 | RHD4GNPPMAT1100, RHD4ENMARSUBMV600 SS |
| RHD4ENMARSUBMV200 |  | Prepare Material Submittal for Medium Voltage Cable 3Cx500 mm2 - MAR-MV | 6d | 2025-12-31 | 2026-01-06 | RHD4GNPPMAT1100, RHD4ENMARSUBMV700 |
| RHD4ENMARSUBMV300 |  | Prepare Material Submittal for Medium Voltage Cable 3Cx50 mm2 - MAR-MV | 6d | 2025-12-31 | 2026-01-06 | RHD4GNPPMAT1100, RHD4ENMARSUBMV200 SS |
| RHD4ENMARSUBMV400 |  | Prepare Material Submittal for Straight Joints 3Cx50 mm2 - MAR-MV | 6d | 2025-12-31 | 2026-01-06 | RHD4GNPPMAT1100, RHD4ENMARSUBMV500 SS |
| RHD4ENMARSUBMV500 |  | Prepare Material Submittal for Normally Open Points (Outdoor type) - MAR-MV | 6d | 2025-12-31 | 2026-01-06 | RHD4GNPPMAT1100, RHD4ENMARSUBMV300 SS |
|  | 61 | **RHD4-02-002-Submittals of Material and Prequalifications - SUB-Low Voltage - LV** |  | 2025-12-16 | 2026-01-05 |  |
| RHD4ENMARSUBLV100 |  | Prepare Material Submittal for UPVC Pipes for Duct Banks - MAR-LV | 7d | 2025-12-16 | 2025-12-23 | RHD4ENMARSUBMV100 SS |
| RHD4ENMARSUBLV500 |  | Prepare Material Submittal for Low Voltage Drawpit - MAR-LV | 6d | 2025-12-16 | 2025-12-22 | RHD4GNPPMAT1100, RHD4ENMARSUBLV100 SS |
| RHD4ENMARSUBLV200 |  | Prepare Material Submittal for Low voltage Cables - MAR-LV | 6d | 2025-12-23 | 2025-12-29 | RHD4ENMARSUBIRR300 |
| RHD4ENMARSUBLV300 |  | Prepare Material Submittal for Distribution Pillars - MAR-LV | 6d | 2025-12-30 | 2026-01-05 | RHD4GNPPMAT1100, RHD4ENMARSUBLV200 |
| RHD4ENMARSUBLV400 |  | Prepare Material Submittal for KWH Meter mounting Frame - MAR-LV | 6d | 2025-12-30 | 2026-01-05 | RHD4GNPPMAT1100, RHD4ENMARSUBLV300 SS |
| RHD4ENMARSUBLV600 |  | Prepare Material Submittal for Earthing for Pillars and Panels - MAR-LV | 6d | 2025-12-30 | 2026-01-05 | RHD4GNPPMAT1100, RHD4ENMARSUBLV400 SS |
|  | 62 | **RHD4-02-002-Submittals of Material and Prequalifications - SUB-Street Lighting Network -SL** |  | 2025-12-24 | 2026-01-12 |  |
| RHD4ENMARSUBSL100 |  | Prepare Material Submittal for UPVC Pipes for Duct Banks - MAR-SL | 5d | 2025-12-24 | 2025-12-29 | RHD4ENMARSUBLV100 |
| RHD4ENMARSUBSL500 |  | Prepare Material Submittal for Street Lighting Drawpit - MAR-SL | 6d | 2025-12-24 | 2025-12-30 | RHD4GNPPMAT1100, RHD4ENMARSUBSL100 SS |
| RHD4ENMARSUBSL300 |  | Prepare Material Submittal for Lighting Poles - MAR-SL | 6d | 2025-12-30 | 2026-01-05 | RHD4ENMARSUBLV200 |
| RHD4ENMARSUBSL200 |  | Prepare Material Submittal for Street Lighting Cables - MAR-SL | 6d | 2026-01-06 | 2026-01-12 | RHD4ENMARSUBSL300 |
| RHD4ENMARSUBSL400 |  | Prepare Material Submittal for Street Lighting Luminaire - MAR-SL | 6d | 2026-01-06 | 2026-01-12 | RHD4ENMARSUBSL200 SS |
|  | 63 | **RHD4-02-002-Submittals of Material and Prequalifications - SUB-Landscape Network - LS** |  |  |  |  |
|  | 64 | **RHD4-02-002-Submittals of Material and Prequalifications - SUB-Telecommunications Network - TC** |  | 2026-01-06 | 2026-01-19 |  |
| RHD4ENMARSUBTC100 |  | Prepare Material Submittal for HDPE Ducts - MAR-TC | 6d | 2026-01-06 | 2026-01-12 | RHD4ENMARSUBSL300 |
| RHD4ENMARSUBTC200 |  | Prepare Material Submittal for HDPE Road Crossings Ducts - MAR-TC | 6d | 2026-01-06 | 2026-01-12 | RHD4ENMARSUBTC100 SS |
| RHD4ENMARSUBTC300 |  | Prepare Material Submittal for Telecommunications Manhole - MAR-TC | 6d | 2026-01-13 | 2026-01-19 | RHD4ENMARSUBTC200 |
|  | 65 | **RHD4-02-002-Submittals of Material and Prequalifications - SUB-Information and Communication Technol** |  | 2026-01-04 | 2026-01-19 |  |
| RHD4ENMARSUBICT300 |  | Prepare Material Submittal for Telecommunications Manhole - MAR-ICT | 4d | 2026-01-04 | 2026-01-07 | RHD4GNMOB1100 |
| RHD4ENMARSUBICT100 |  | Prepare Material Submittal for HDPE Ducts - MAR-ICT | 6d | 2026-01-13 | 2026-01-19 | RHD4ENMARSUBTC100 |
| RHD4ENMARSUBICT200 |  | Prepare Material Submittal for HDPE Road Crossings Ducts - MAR-ICT | 6d | 2026-01-13 | 2026-01-19 | RHD4ENMARSUBICT100 SS |
|  | 66 | **RHD4-02-002-Submittals of Material and Prequalifications - SUB-Security Network - CCTV** |  | 2025-12-13 | 2026-01-24 |  |
| RHD4ENMARSUBCCTV300 |  | Prepare Material Submittal for CCTV Panels and Panel's Components - MAR-CCTV | 6d | 2025-12-13 | 2025-12-18 | RHD4GNPPMAT1100 |
| RHD4ENMARSUBCCTV400 |  | Prepare Material Submittal for CCTV Fiber Optic Cables - MAR-CCTV | 6d | 2025-12-20 | 2025-12-25 | RHD4GNPPMAT1100, RHD4ENMARSUBCCTV300 |
| RHD4ENMARSUBCCTV200 |  | Prepare Material Submittal for CCTV Network Cameras - MAR-CCTV | 6d | 2025-12-27 | 2026-01-01 | RHD4GNPPMAT1100, RHD4ENMARSUBCCTV400 |
| RHD4ENMARSUBCCTV500 |  | Prepare Material Submittal for CCTV Control Room Components - MAR-CCTV | 6d | 2025-12-27 | 2026-01-01 | RHD4GNPPMAT1100, RHD4ENMARSUBCCTV200 SS |
| RHD4ENMARSUBCCTV100 |  | Prepare Material Submittal for CCTV Network Poles - MAR-CCTV | 4d | 2026-01-20 | 2026-01-24 | RHD4GNPPMAT1100, RHD4ENMARSUBTC300, RHD4ENMARSUBICT300 |
|  | 67 | **RHD4-02-002-Submittals of Material and Prequalifications - SUB-Road Works - RD** |  | 2025-12-16 | 2026-01-19 |  |
| RHD4ENMARSUBRD100 |  | Prepare Material Submittal for Aggregate Base Courses - MAR-RD | 6d | 2025-12-16 | 2025-12-22 | RHD4GNMOB1000 |
| RHD4ENMARSUBRD500 |  | Prepare Material Submittal for Wheel Stopper - MAR-RD | 6d | 2025-12-16 | 2025-12-22 | RHD4GNMOB1000 |
| RHD4ENMARSUBRD600 |  | Prepare Material Submittal for Pavement Marking - MAR-RD | 6d | 2025-12-16 | 2025-12-22 | RHD4ENMARSUBRD500 SS |
| RHD4ENMARSUBRD200 |  | Prepare Material Submittal for Bituminous Asphalt Layers - MAR-RD | 6d | 2025-12-23 | 2025-12-29 | RHD4ENMARSUBRD100 |
| RHD4ENMARSUBRD300 |  | Prepare Material Submittal for Precast Concrete Curbstone - MAR-RD | 6d | 2025-12-30 | 2026-01-05 | RHD4ENMARSUBRD200 |
| RHD4ENMARSUBRD700 |  | Prepare Material Submittal for Traffic Signage - MAR-RD | 6d | 2026-01-06 | 2026-01-12 | RHD4ENMARSUBRD300 |
| RHD4ENMARSUBRD400 |  | Prepare Material Submittal for Interlock Precast Concrete Unit Paving - MAR-RD | 6d | 2026-01-13 | 2026-01-19 | RHD4ENMARSUBRD700 |
|  | 68 | **RHD4-02-002-Submittals of Material and Prequalifications - SUB-Lift Stations - LFS** |  | 2025-12-13 | 2026-01-20 |  |
| RHD4ENMARSUBLFS2600 |  | Prepare Material Submittal for Wiring Devices - MAR-LFS | 6d | 2025-12-13 | 2025-12-18 | RHD4GNPPMAT1100, RHD4ENMARSUBLFS2900 SS |
| RHD4ENMARSUBLFS2700 |  | Prepare Material Submittal for Enclosed Switches and Circuit Breakers - MAR-LFS | 6d | 2025-12-13 | 2025-12-18 | RHD4GNPPMAT1100, RHD4ENMARSUBLFS2600 SS |
| RHD4ENMARSUBLFS2800 |  | Prepare Material Submittal for Programmable Logic Controllers and Instrumentation for Process Systems - MAR-LFS(Complete | 7d | 2025-12-13 | 2025-12-20 | RHD4GNPERMITAT1000 |
| RHD4ENMARSUBLFS2900 |  | Prepare Material Submittal for Fire Alarm System - MAR-LFS | 6d | 2025-12-13 | 2025-12-18 | RHD4ENMARSUBLFS2800 SS |
| RHD4ENMARSUBLFS500 |  | Prepare Material Submittal for Metal Doors and Access Doors and Frames - MAR-LFS | 6d | 2025-12-13 | 2025-12-18 | RHD4GNPPMAT1100 |
| RHD4ENMARSUBLFS800 |  | Prepare Material Submittal for Ductile Iron Pipes & Fittings - MAR-LFS(Completed) | 7d | 2025-12-15 | 2025-12-22 | RHD4ENSDZ6SUBRD220 |
| RHD4ENMARSUBLFS900 |  | Prepare Material Submittal for Sewage Lift Station Valves - MAR-LFS | 7d | 2025-12-15 | 2025-12-22 | RHD4ENMARSUBLFS800 SS |
| RHD4ENMARSUBLFS1800 |  | Prepare Material Submittal for UPVC Pipes for Sanitary Drain - MAR-LFS | 5d | 2025-12-16 | 2025-12-21 | RHD4GNMOB1000 |
| RHD4ENMARSUBLFS2200 |  | Prepare Material Submittal for Earthing for Lift Stations - MAR-LFS | 6d | 2025-12-20 | 2025-12-25 | RHD4GNPPMAT1100, RHD4ENMARSUBLFS2700 |
| RHD4ENMARSUBLFS600 |  | Prepare Material Submittal for Painting - MAR-LFS | 7d | 2025-12-20 | 2025-12-27 | RHD4GNPPMAT1100, RHD4ENMARSUBLFS500 |
| RHD4ENMARSUBLFS200 |  | Prepare Material Submittal for Roof Waterproofing System - MAR-LFS | 5d | 2025-12-22 | 2025-12-27 | RHD4ENMARSUBLFS1800 |
| RHD4ENMARSUBLFS1000 |  | Prepare Material Submittal for Screening Container - MAR-LFS | 7d | 2025-12-23 | 2025-12-30 | RHD4GNPPMAT1100, RHD4ENMARSUBLFS900 |
| RHD4ENMARSUBLFS1300 |  | Prepare Material Submittal for Surge Tank - MAR-LFS | 7d | 2025-12-28 | 2026-01-04 | RHD4ENMARSUBLFS200 |
| RHD4ENMARSUBLFS2000 |  | Prepare Material Submittal for Motor Control Center (MCC) - MAR-LFS | 4d | 2025-12-28 | 2025-12-31 | RHD4ENMARSUBLFS200 |
| RHD4ENMARSUBLFS300 |  | Prepare Material Submittal for Bituminous Sheet Waterproofing - MAR-LFS | 7d | 2025-12-28 | 2026-01-04 | RHD4ENMARSUBLFS200 |
| RHD4ENMARSUBLFS2300 |  | Prepare Material Submittal for Standby Diesel Generator - MAR-LFS | 7d | 2026-01-01 | 2026-01-08 | RHD4ENMARSUBLFS2000 |
| RHD4ENMARSUBLFS2400 |  | Prepare Material Submittal for Low Voltage Cables - MAR-LFS | 6d | 2026-01-01 | 2026-01-07 | RHD4ENMARSUBLFS2300 SS |
| RHD4ENMARSUBLFS3000 |  | Prepare Material Submittal for Fence and Gates for Lift Stations - MAR-LFS | 6d | 2026-01-01 | 2026-01-07 | RHD4ENMARSUBLFS2000 |
| RHD4ENMARSUBLFS1400 |  | Prepare Material Submittal for Basket screen - MAR-LFS | 7d | 2026-01-05 | 2026-01-12 | RHD4ENMARSUBLFS1300 |
| RHD4ENMARSUBLFS1500 |  | Prepare Material Submittal for Isolation Penstock - MAR-LFS | 6d | 2026-01-05 | 2026-01-11 | RHD4ENMARSUBLFS1400 SS |
| RHD4ENMARSUBLFS1600 |  | Prepare Material Submittal for Odours scrubbing system - MAR-LFS | 7d | 2026-01-05 | 2026-01-12 | RHD4ENMARSUBLFS1500 SS |
| RHD4ENMARSUBLFS1700 |  | Prepare Material Submittal for JIB Crane - MAR-LFS | 7d | 2026-01-05 | 2026-01-12 | RHD4ENMARSUBLFS1600 SS |
| RHD4ENMARSUBLFS1900 |  | Prepare Material Submittal for wall mounted Split/AC - MAR-LFS | 6d | 2026-01-05 | 2026-01-11 | RHD4GNPPMAT1100, RHD4ENMARSUBLFS1700 SS |
| RHD4ENMARSUBLFS400 |  | Prepare Material Submittal for Fluid-Applied Waterproofing - MAR-LFS | 6d | 2026-01-05 | 2026-01-11 | RHD4ENMARSUBLFS300 |
| RHD4ENMARSUBLFS2100 |  | Prepare Material Submittal for lighting and power panel boards - MAR-LFS | 4d | 2026-01-08 | 2026-01-12 | RHD4ENMARSUBLFS2400 |
| RHD4ENMARSUBLFS700 |  | Prepare Material Submittal for Epoxy Coating - MAR-LFS | 6d | 2026-01-08 | 2026-01-14 | RHD4ENMARSUBLFS3000 |
| RHD4ENMARSUBLFS100 |  | Prepare Material Submittal for Metal Ladder and checkered Plate - MAR-LFS | 6d | 2026-01-12 | 2026-01-18 | RHD4GNPPMAT1100, RHD4ENMARSUBLFS400 |
| RHD4ENMARSUBLFS1100 |  | Prepare Material Submittal for Magnetic type flowmeter - MAR-LFS(Completed) | 7d | 2026-01-13 | 2026-01-20 | RHD4ENMARSUBRD700 |

| ID | WBS | Task | Duration | Start | Finish | Predecessors |
| --- | --- | --- | --- | --- | --- | --- |
| RHD4ENMARSUBLFS1200 |  | Prepare Material Submittal for Submersible pumps - MAR-LFS | 7d | 2026-01-13 | 2026-01-20 | RHD4ENMARSUBLFS1100 SS |
| RHD4ENMARSUBLFS2500 |  | Prepare Material Submittal for Lighting Fixtures - MAR-LFS | 6d | 2026-01-13 | 2026-01-19 | RHD4ENMARSUBLFS2100 |
|  | 2 | **RHD4-02-002-Submittals of Material and Prequalifications - SUB-Tunnels - TUN** |  | 2026-01-15 | 2026-01-21 |  |
| RHD4ENMARSUBTU100 |  | Prepare Material Submittal for Concrete - MAR-TUN | 6d | 2026-01-15 | 2026-01-21 | RHD4ENMARSUBLFS700 |
|  | 69 | **RHD4-02-002-Approval of Material and Prequalifications - APP** |  | 2025-12-13 | 2026-01-28 |  |
|  | 1 | **RHD4-02-002-Approval of Material and Prequalifications - APP-Earth works Material - EW** |  | 2026-01-20 | 2026-01-27 |  |
| RHD4ENMARAPPEW100 |  | Approval of Material Submittal for Earth work Materials - MAR-EW | 7d | 2026-01-20 | 2026-01-27 | RHD4ENMARSUBEW100 |
|  | 70 | **RHD4-02-002-Approval of Material and Prequalifications - APP-Storm Network - ST** |  | 2025-12-23 | 2026-01-24 |  |
| RHD4ENMARAPPST100 |  | Approval of Material Submittal for GRP pipes - MAR-ST | 7d | 2025-12-23 | 2025-12-30 | RHD4ENSDZ6APPCCTV210, RHD4ENSDZ6APPSL170, RHD4ENSDZ6APPLV160, RHD4ENSDZ6APPICT200, RHD4ENMSSL2010, RHD4ENSDZ6APPTC190, RHD4ENMSLV2010, RHD4ENMARSUBST100 |
| RHD4ENMARAPPST200 |  | Approval of Material Submittal for UPVC pipes - MAR-ST | 7d | 2025-12-24 | 2025-12-31 | RHD4ENMARSUBST200 |
| RHD4ENMARAPPST400 |  | Approval of Material Submittal for Catch basin - MAR-ST | 7d | 2026-01-01 | 2026-01-08 | RHD4ENMARSUBST400 |
| RHD4ENMARAPPST300 |  | Approval of Material Submittal for HDPE pipes - MAR-ST | 7d | 2026-01-10 | 2026-01-17 | RHD4ENMARSUBST300 |
| RHD4ENMARAPPST700 |  | Approval of Material Submittal for Precast Concrete - MAR-ST | 7d | 2026-01-12 | 2026-01-19 | RHD4ENMARSUBST700 |
| RHD4ENMARAPPST500 |  | Approval of Material Submittal for Grouted Riprap - MAR-ST | 7d | 2026-01-13 | 2026-01-20 | RHD4ENMARSUBST500 |
| RHD4ENMARAPPST600 |  | Approval of Material Submittal for Tensile reinforcement steel - MAR-ST | 7d | 2026-01-17 | 2026-01-24 | RHD4ENMARSUBST600 |
| RHD4ENMARAPPST800 |  | Approval of Material Submittal for Metal Works (Stairs - Manhole Covers) - MAR-ST | 7d | 2026-01-17 | 2026-01-24 | RHD4ENMARSUBST800 |
|  | 72 | **RHD4-02-002-Approval of Material and Prequalifications - APP-Potable Water Network - PT** |  | 2025-12-23 | 2026-01-22 |  |
| RHD4ENMARAPPPT300 |  | Approval of Material Submittal for Fire Hydrants - MAR-PT | 2d | 2025-12-23 | 2025-12-24 | RHD4ENMARSUBPT300 |
| RHD4ENMARAPPPT400 |  | Approval of Material Submittal for Precast Concrete - MAR-PT | 6d | 2025-12-30 | 2026-01-05 | RHD4ENMARSUBPT400 |
| RHD4ENMARAPPPT600 |  | Approval of Material Submittal for Metal Works (Chamber's Covers) - MAR-PT | 6d | 2025-12-30 | 2026-01-05 | RHD4GNPPMAT1100, RHD4ENMARSUBPT400 SS, RHD4ENMARSUBPT600 |
| RHD4ENMARAPPPT100 |  | Approval of Material Submittal for HDPE pipes - MAR-PT | 7d | 2026-01-08 | 2026-01-15 | RHD4ENMARSUBPT100 |
| RHD4ENMARAPPPT200 |  | Approval of Material Submittal for Valves - MAR-PT | 7d | 2026-01-15 | 2026-01-22 | RHD4ENMARSUBPT200 |
| RHD4ENMARAPPPT500 |  | Approval of Material Submittal for Stem and Surface box - MAR-PT | 6d | 2026-01-15 | 2026-01-21 | RHD4ENMARSUBPT500 |
|  | 73 | **RHD4-02-002-Approval of Material and Prequalifications - APP-Irrigation Network - IRR** |  | 2025-12-23 | 2026-01-25 |  |
| RHD4ENMARAPPIRR300 |  | Approval of Material Submittal for Precast Concrete - MAR-IRR | 6d | 2025-12-23 | 2025-12-29 | RHD4ENMARSUBIRR300 |
| RHD4ENMARAPPIRR500 |  | Approval of Material Submittal for Metal Works (Chamber's Covers) - MAR-IRR | 6d | 2025-12-31 | 2026-01-06 | RHD4GNPPMAT1100, RHD4ENMARSUBIRR300, RHD4ENMARSUBIRR500 |
| RHD4ENMARAPPIRR100 |  | Approval of Material Submittal for HDPE pipes - MAR-IRR | 7d | 2026-01-10 | 2026-01-17 | RHD4ENMARSUBIRR100 |
| RHD4ENMARAPPIRR400 |  | Approval of Material Submittal for Stem and Surface box - MAR-IRR | 6d | 2026-01-17 | 2026-01-22 | RHD4ENMARSUBIRR400 |
| RHD4ENMARAPPIRR200 |  | Approval of Material Submittal for Valves - MAR-IRR | 7d | 2026-01-18 | 2026-01-25 | RHD4ENMARSUBIRR200 |
|  | 74 | **RHD4-02-002-Approval of Material and Prequalifications - APP-Medium Voltage - MV** |  | 2025-12-24 | 2026-01-13 |  |
| RHD4ENMARAPPMV100 |  | Approval of Material Submittal for UPVC Pipes for Duct Banks - MAR-MV | 6d | 2025-12-24 | 2025-12-30 | RHD4ENMARSUBMV100 |
| RHD4ENMARAPPMV600 |  | Approval of Material Submittal for Unit Substations - MAR-MV | 6d | 2025-12-31 | 2026-01-06 | RHD4ENMARSUBMV600 |
| RHD4ENMARAPPMV700 |  | Approval of Material Submittal for Ring Main Unit (RMU) - MAR-MV | 6d | 2025-12-31 | 2026-01-06 | RHD4ENMARSUBMV700 |
| RHD4ENMARAPPMV200 |  | Approval of Material Submittal for Medium Voltage Cable 3Cx500 mm2 - MAR-MV | 6d | 2026-01-07 | 2026-01-13 | RHD4ENMARSUBMV200 |
| RHD4ENMARAPPMV300 |  | Approval of Material Submittal for Medium Voltage Cable 3Cx50 mm2 - MAR-MV | 6d | 2026-01-07 | 2026-01-13 | RHD4ENMARSUBMV300 |
| RHD4ENMARAPPMV400 |  | Approval of Material Submittal for Straight Joints 3Cx50 mm2 - MAR-MV | 6d | 2026-01-07 | 2026-01-13 | RHD4ENMARSUBMV400 |
| RHD4ENMARAPPMV500 |  | Approval of Material Submittal for Normally Open Points (Outdoor type) - MAR-MV | 6d | 2026-01-07 | 2026-01-13 | RHD4ENMARSUBMV500 |
|  | 75 | **RHD4-02-002-Approval of Material and Prequalifications - APP-Low Voltage - LV** |  | 2025-12-23 | 2026-01-12 |  |
| RHD4ENMARAPPLV500 |  | Approval of Material Submittal for Low Voltage Drawpit - MAR-LV | 6d | 2025-12-23 | 2025-12-29 | RHD4ENMARSUBLV500 |
| RHD4ENMARAPPLV100 |  | Approval of Material Submittal for UPVC Pipes for Duct Banks - MAR-LV | 7d | 2025-12-24 | 2025-12-31 | RHD4ENMARSUBLV100 |
| RHD4ENMARAPPLV200 |  | Approval of Material Submittal for Low voltage Cables - MAR-LV | 6d | 2025-12-30 | 2026-01-05 | RHD4ENMARSUBLV200 |
| RHD4ENMARAPPLV300 |  | Approval of Material Submittal for Distribution Pillars - MAR-LV | 6d | 2026-01-06 | 2026-01-12 | RHD4ENMARSUBLV300 |
| RHD4ENMARAPPLV400 |  | Approval of Material Submittal for KWH Meter mounting Frame - MAR-LV | 6d | 2026-01-06 | 2026-01-12 | RHD4ENMARSUBLV400 |
| RHD4ENMARAPPLV600 |  | Approval of Material Submittal for Earthing for Pillars and Panels - MAR-LV | 6d | 2026-01-06 | 2026-01-12 | RHD4ENMARSUBLV600 |
|  | 76 | **RHD4-02-002-Approval of Material and Prequalifications - APP-Street Lighting Network -SL** |  | 2025-12-30 | 2026-01-19 |  |
| RHD4ENMARAPPSL100 |  | Approval of Material Submittal for UPVC Pipes for Duct Banks - MAR-SL | 6d | 2025-12-30 | 2026-01-05 | RHD4ENMARSUBSL100 |
| RHD4ENMARAPPSL500 |  | Approval of Material Submittal for Street Lighting Drawpit - MAR-SL | 6d | 2025-12-31 | 2026-01-06 | RHD4ENMARSUBSL500 |
| RHD4ENMARAPPSL300 |  | Approval of Material Submittal for Lighting Poles - MAR-SL | 3d | 2026-01-06 | 2026-01-08 | RHD4ENMARSUBSL300 |
| RHD4ENMARAPPSL200 |  | Approval of Material Submittal for Street Lighting Cables - MAR-SL | 6d | 2026-01-13 | 2026-01-19 | RHD4ENMARSUBSL200 |
| RHD4ENMARAPPSL400 |  | Approval of Material Submittal for Street Lighting Luminaire - MAR-SL | 6d | 2026-01-13 | 2026-01-19 | RHD4ENMARSUBSL400 |
|  | 77 | **RHD4-02-002-Approval of Material and Prequalifications - APP-Landscape Network - LS** |  |  |  |  |
|  | 78 | **RHD4-02-002-Approval of Material and Prequalifications - APP-Telecommunications Network - TC** |  | 2026-01-13 | 2026-01-26 |  |
| RHD4ENMARAPPTC100 |  | Approval of Material Submittal for HDPE Ducts - MAR-TC | 4d | 2026-01-13 | 2026-01-17 | RHD4ENMARSUBTC100 |
| RHD4ENMARAPPTC200 |  | Approval of Material Submittal for HDPE Road Crossings Ducts - MAR-TC | 4d | 2026-01-13 | 2026-01-17 | RHD4ENMARSUBTC200 |
| RHD4ENMARAPPTC300 |  | Approval of Material Submittal for Telecommunications Manhole - MAR-TC | 6d | 2026-01-20 | 2026-01-26 | RHD4ENMARSUBTC300 |
|  | 79 | **RHD4-02-002-Approval of Material and Prequalifications - APP-Information and Communication Technolog** |  | 2026-01-08 | 2026-01-24 |  |
| RHD4ENMARAPPICT300 |  | Approval of Material Submittal for Telecommunications Manhole - MAR-ICT | 6d | 2026-01-08 | 2026-01-14 | RHD4ENMARSUBICT300 |
| RHD4ENMARAPPICT100 |  | Approval of Material Submittal for HDPE Ducts - MAR-ICT | 4d | 2026-01-20 | 2026-01-24 | RHD4ENMARSUBICT100 |
| RHD4ENMARAPPICT200 |  | Approval of Material Submittal for HDPE Road Crossings Ducts - MAR-ICT | 4d | 2026-01-20 | 2026-01-24 | RHD4ENMARSUBICT200 |
|  | 80 | **RHD4-02-002-Approval of Material and Prequalifications - APP-Security Network - CCTV** |  | 2025-12-20 | 2026-01-28 |  |
| RHD4ENMARAPPCCTV300 |  | Approval of Material Submittal for CCTV Panels and Panel's Components - MAR-CCTV | 6d | 2025-12-20 | 2025-12-25 | RHD4ENMARSUBCCTV300 |
| RHD4ENMARAPPCCTV400 |  | Approval of Material Submittal for CCTV Fiber Optic Cables - MAR-CCTV | 6d | 2025-12-27 | 2026-01-01 | RHD4ENMARSUBCCTV400 |
| RHD4ENMARAPPCCTV200 |  | Approval of Material Submittal for CCTV Network Cameras - MAR-CCTV | 6d | 2026-01-03 | 2026-01-08 | RHD4ENMARSUBCCTV200 |
| RHD4ENMARAPPCCTV500 |  | Approval of Material Submittal for CCTV Control Room Components - MAR-CCTV | 6d | 2026-01-03 | 2026-01-08 | RHD4ENMARSUBCCTV500 |
| RHD4ENMARAPPCCTV100 |  | Approval of Material Submittal for CCTV Network Poles - MAR-CCTV | 4d | 2026-01-25 | 2026-01-28 | RHD4ENMARSUBCCTV100 |
|  | 81 | **RHD4-02-002-Approval of Material and Prequalifications - APP-Road Works - RD** |  | 2025-12-23 | 2026-01-27 |  |
| RHD4ENMARAPPRD100 |  | Approval of Material Submittal for Aggregate Base Courses - MAR-RD | 6d | 2025-12-23 | 2025-12-29 | RHD4ENMARSUBRD100 |
| RHD4ENMARAPPRD500 |  | Approval of Material Submittal for Wheel Stopper - MAR-RD | 6d | 2025-12-23 | 2025-12-29 | RHD4ENMARSUBRD500 |
| RHD4ENMARAPPRD600 |  | Approval of Material Submittal for Pavement Marking - MAR-RD | 6d | 2025-12-23 | 2025-12-29 | RHD4ENMARSUBRD600 |
| RHD4ENMARAPPRD200 |  | Approval of Material Submittal for Bituminous Asphalt Layers - MAR-RD | 6d | 2025-12-30 | 2026-01-05 | RHD4ENMARSUBRD200 |

| ID | WBS | Task | Duration | Start | Finish | Predecessors |
| --- | --- | --- | --- | --- | --- | --- |
| RHD4ENMARAPPRD300 |  | Approval of Material Submittal for Precast Concrete Curbstone - MAR-RD | 6d | 2026-01-06 | 2026-01-12 | RHD4ENMARSUBRD300 |
| RHD4ENMARAPPRD700 |  | Approval of Material Submittal for Traffic Signage - MAR-RD | 6d | 2026-01-13 | 2026-01-19 | RHD4ENMARSUBRD700 |
| RHD4ENMARAPPRD400 |  | Approval of Material Submittal for Interlock Precast Concrete Unit Paving - MAR-RD | 7d | 2026-01-20 | 2026-01-27 | RHD4ENMARSUBRD400 |
|  | 82 | **RHD4-02-002-Approval of Material and Prequalifications - APP-Lift Stations - LFS** |  | 2025-12-13 | 2026-01-27 |  |
| RHD4ENMARAPPLFS2800 |  | Approval of Material Submittal for Programmable Logic Controllers and Instrumentation for Process Systems - MAR-LFS(Comp | 6d | 2025-12-13 | 2025-12-18 | RHD4ENMARSUBLFS2800 SS |
| RHD4ENMARAPPLFS2600 |  | Approval of Material Submittal for Wiring Devices - MAR-LFS | 6d | 2025-12-20 | 2025-12-25 | RHD4ENMARSUBLFS2600 |
| RHD4ENMARAPPLFS2700 |  | Approval of Material Submittal for Enclosed Switches and Circuit Breakers - MAR-LFS | 6d | 2025-12-20 | 2025-12-25 | RHD4ENMARSUBLFS2700 |
| RHD4ENMARAPPLFS2900 |  | Approval of Material Submittal for Fire Alarm System - MAR-LFS | 3d | 2025-12-20 | 2025-12-22 | RHD4ENMARSUBLFS2900 |
| RHD4ENMARAPPLFS500 |  | Approval of Material Submittal for Metal Doors and Access Doors and Frames - MAR-LFS | 6d | 2025-12-20 | 2025-12-25 | RHD4ENMARSUBLFS500 |
| RHD4ENMARAPPLFS1800 |  | Approval of Material Submittal for UPVC Pipes for Sanitary Drain - MAR-LFS | 7d | 2025-12-22 | 2025-12-29 | RHD4ENMARSUBLFS1800 |
| RHD4ENMARAPPLFS800 |  | Approval of Material Submittal for Ductile Iron Pipes & Fittings - MAR-LFS | 6d | 2025-12-23 | 2025-12-29 | RHD4GNPPMAT1100, RHD4ENSDZ6SUBRD220, RHD4ENMARSUBLFS800 |
| RHD4ENMARAPPLFS900 |  | Approval of Material Submittal for Sewage Lift Station Valves - MAR-LFS | 6d | 2025-12-23 | 2025-12-29 | RHD4ENMARSUBLFS900 |
| RHD4ENMARAPPLFS2200 |  | Approval of Material Submittal for Earthing for Lift Stations - MAR-LFS | 6d | 2025-12-27 | 2026-01-01 | RHD4ENMARSUBLFS2200 |
| RHD4ENMARAPPLFS200 |  | Approval of Material Submittal for Roof Waterproofing System - MAR-LFS | 3d | 2025-12-28 | 2025-12-30 | RHD4ENMARSUBLFS200 |
| RHD4ENMARAPPLFS600 |  | Approval of Material Submittal for Painting - MAR-LFS | 6d | 2025-12-28 | 2026-01-03 | RHD4ENMARSUBLFS600 |
| RHD4ENMARAPPLFS2000 |  | Approval of Material Submittal for Motor Control Center (MCC) - MAR-LFS | 2d | 2026-01-01 | 2026-01-03 | RHD4ENMARSUBLFS2000 |
| RHD4ENMARAPPLFS1300 |  | Approval of Material Submittal for Surge Tank - MAR-LFS | 6d | 2026-01-05 | 2026-01-11 | RHD4ENMARSUBLFS1300 |
| RHD4ENMARAPPLFS300 |  | Approval of Material Submittal for Bituminous Sheet Waterproofing - MAR-LFS | 3d | 2026-01-05 | 2026-01-07 | RHD4ENMARAPPLFS2000, RHD4ENMARSUBLFS300 |
| RHD4ENMARAPPLFS2400 |  | Approval of Material Submittal for Low Voltage Cables - MAR-LFS | 3d | 2026-01-08 | 2026-01-11 | RHD4ENMARSUBLFS2400 |
| RHD4ENMARAPPLFS3000 |  | Approval of Material Submittal for Fences and Gates - MAR-LFS | 2d | 2026-01-08 | 2026-01-10 | RHD4ENMARSUBLFS3000 |
| RHD4ENMARAPPLFS2300 |  | Approval of Material Submittal for Standby Diesel Generator - MAR-LFS | 6d | 2026-01-10 | 2026-01-15 | RHD4ENMARSUBLFS2300 |
| RHD4ENMARAPPLFS1000 |  | Approval of Material Submittal for Screening Container - MAR-LFS | 6d | 2026-01-12 | 2026-01-18 | RHD4ENMARAPPLFS2400, RHD4ENMARSUBLFS1000 |
| RHD4ENMARAPPLFS1500 |  | Approval of Material Submittal for Isolation Penstock - MAR-LFS | 6d | 2026-01-12 | 2026-01-18 | RHD4ENMARSUBLFS1500 |
| RHD4ENMARAPPLFS1900 |  | Approval of Material Submittal for wall mounted Split/AC - MAR-LFS | 6d | 2026-01-12 | 2026-01-18 | RHD4ENMARSUBLFS1900 |
| RHD4ENMARAPPLFS1400 |  | Approval of Material Submittal for Basket screen - MAR-LFS | 7d | 2026-01-13 | 2026-01-20 | RHD4ENMARSUBLFS1400 |
| RHD4ENMARAPPLFS1600 |  | Approval of Material Submittal for Odours scrubbing system - MAR-LFS | 6d | 2026-01-13 | 2026-01-19 | RHD4ENMARSUBLFS1600 |
| RHD4ENMARAPPLFS1700 |  | Approval of Material Submittal for JIB Crane - MAR-LFS | 7d | 2026-01-13 | 2026-01-20 | RHD4ENMARSUBLFS1700 |
| RHD4ENMARAPPLFS2100 |  | Approval of Material Submittal for lighting and power panel boards - MAR-LFS | 2d | 2026-01-13 | 2026-01-14 | RHD4ENMARSUBLFS2100 |
| RHD4ENMARAPPLFS700 |  | Approval of Material Submittal for Epoxy Coating - MAR-LFS | 2d | 2026-01-15 | 2026-01-17 | RHD4ENMARSUBLFS700 |
| RHD4ENMARAPPLFS400 |  | Approval of Material Submittal for Fluid-Applied Waterproofing - MAR-LFS | 3d | 2026-01-17 | 2026-01-19 | RHD4ENMARAPPLFS2300, RHD4ENMARSUBLFS400 |
| RHD4ENMARAPPLFS100 |  | Approval of Material Submittal for Metal Ladder and checkered Plate - MAR-LFS | 6d | 2026-01-19 | 2026-01-25 | RHD4ENMARSUBLFS100 |
| RHD4ENMARAPPLFS2500 |  | Approval of Material Submittal for Lighting Fixtures - MAR-LFS | 6d | 2026-01-20 | 2026-01-26 | RHD4ENMARSUBLFS2500 |
| RHD4ENMARAPPLFS2800_R |  | Approval of Material Submittal for Programmable Logic Controllers and Instrumentation for Process Systems - MAR-LFS(Rema | 6d | 2026-01-20 | 2026-01-26 | RHD4ENMARAPPLFS2800, RHD4GNPPMAT1100, RHD4ENMARSUBLFS2500, RHD4ENMARSUBLFS2800 |
| RHD4ENMARAPPLFS1100 |  | Approval of Material Submittal for Magnetic type flowmeter - MAR-LFS | 6d | 2026-01-21 | 2026-01-27 | RHD4GNPPMAT1100, RHD4ENMARSUBLFS1000, RHD4ENMARSUBLFS1100 |
| RHD4ENMARAPPLFS1200 |  | Approval of Material Submittal for Submersible pumps - MAR-LFS | 6d | 2026-01-21 | 2026-01-27 | RHD4ENMARSUBLFS1200 |
|  | 71 | **RHD4-02-002-Approval of Material and Prequalifications - APP-Sewage Network - SW** |  | 2025-12-30 | 2026-01-27 |  |
| RHD4ENMARAPPSW200 |  | Approval of Material Submittal for GRP pipes - MAR-SW | 7d | 2025-12-30 | 2026-01-06 | RHD4ENMARSUBSW200 |
| RHD4ENMARAPPSW300 |  | Approval of Material Submittal for Valves - MAR-SW | 7d | 2026-01-06 | 2026-01-13 | RHD4ENMARSUBSW300 |
| RHD4ENMARAPPSW100 |  | Approval of Material Submittal for UPVC pipes - MAR-SW | 7d | 2026-01-07 | 2026-01-14 | RHD4ENMARSUBSW100 |
| RHD4ENMARAPPSW400 |  | Approval of Material Submittal for Precast Concrete - MAR-SW | 6d | 2026-01-13 | 2026-01-19 | RHD4ENMARSUBSW400 |
| RHD4ENMARAPPSW600 |  | Approval of Material Submittal for HDPE pipes - MAR-SW | 7d | 2026-01-20 | 2026-01-27 | RHD4ENMARSUBSW600 |
| RHD4ENMARAPPSW500 |  | Approval of Material Submittal for Metal Works (Stairs - Manhole Covers) - MAR-SW | 2d | 2026-01-21 | 2026-01-22 | RHD4ENMARSUBSW500 |
|  | 2 | **RHD4-02-002-Approval of Material and Prequalifications - APP-Tunnels - TUN** |  | 2026-01-22 | 2026-01-28 |  |
| RHD4ENMARAPPTU100 |  | Approval of Material Submittal for Concrete - MAR-TU | 6d | 2026-01-22 | 2026-01-28 | RHD4ENMARSUBTU100 |
|  | 97 | **RHD4-02-002-Procurement - PR** |  | 2025-12-23 | 2026-09-03 |  |
|  | 127 | **RHD4-02-002-Long Lead Items -LOL** |  | 2026-01-07 | 2026-07-02 |  |
|  | 128 | **RHD4-02-002-Long Lead Items - LOL-Material Purchase Order - PO** |  | 2026-01-07 | 2026-02-12 |  |
|  | 104 | **RHD4-02-002-LOL-Material Purchase Order - PO-Medium Voltage - MV** |  | 2026-01-07 | 2026-01-22 |  |
| RHD4PRLOLPOMV1500 |  | Material Purchase Order for Unit Substations - LOL-MV | 14d | 2026-01-07 | 2026-01-22 | RHD4ENMARAPPMV600 |
| RHD4PRLOLPOMV1600 |  | Material Purchase Order for Ring Main Unit (RMU) - LOL-MV | 14d | 2026-01-07 | 2026-01-22 | RHD4ENMARAPPMV700 |
|  | 129 | **RHD4-02-002-LOL-Material Purchase Order - PO-Security Network - CCTV** |  | 2026-01-10 | 2026-01-25 |  |
| RHD4PRLOLPOCCTV1000 |  | Material Purchase Order for CCTV Control Room Components - LOL-CCTV | 14d | 2026-01-10 | 2026-01-25 | RHD4ENMARAPPCCTV500 |
|  | 130 | **RHD4-02-002-LOL-Material Purchase Order - PO-Lift Stations - LFS** |  | 2026-01-12 | 2026-02-12 |  |
| RHD4PRLOLPOLFS1300 |  | Material Purchase Order for Surge Tank - LOL-LFS | 14d | 2026-01-12 | 2026-01-27 | RHD4ENMARAPPLFS1300 |
| RHD4PRLOLPOLFS1600 |  | Material Purchase Order for Standby Diesel Generator - LOL-LFS | 14d | 2026-01-17 | 2026-02-01 | RHD4ENMARAPPLFS2300 |
| RHD4PRLOLPOLFS1000 |  | Material Purchase Order for Screening Container - LOL-LFS | 14d | 2026-01-19 | 2026-02-03 | RHD4ENMARAPPLFS1000 |
| RHD4PRLOLPOLFS2000 |  | Material Purchase Order for Isolation Penstock - LOL-LFS | 14d | 2026-01-19 | 2026-02-03 | RHD4ENMARAPPLFS1500 |
| RHD4PRLOLPOLFS1400 |  | Material Purchase Order for Odours scrubbing system - LOL-LFS | 4d | 2026-01-20 | 2026-01-24 | RHD4ENMARAPPLFS1600 |
| RHD4PRLOLPOLFS1500 |  | Material Purchase Order for JIB Crane - LOL-LFS | 14d | 2026-01-21 | 2026-02-05 | RHD4ENMARAPPLFS1700 |
| RHD4PRLOLPOLFS1700 |  | Material Purchase Order for Programmable Logic Controllers and Instrumentation for Process Systems - LOL-LFS | 14d | 2026-01-27 | 2026-02-11 | RHD4ENMARAPPLFS2800_R |
| RHD4PRLOLPOLFS1100 |  | Material Purchase Order for Magnetic type flowmeter - LOL-PO | 14d | 2026-01-28 | 2026-02-12 | RHD4ENMARAPPLFS1100 |
| RHD4PRLOLPOLFS1200 |  | Material Purchase Order for Submersible pumps - LOL-PO | 7d | 2026-01-28 | 2026-02-04 | RHD4ENMARAPPLFS1200 |
|  | 131 | **RHD4-02-002-Long Lead Items - LOL-Manufacturing - MAF** |  | 2026-01-23 | 2026-06-12 |  |
|  | 1 | **RHD4-02-002-LOL-Manufacturing - MAF-Medium Voltage Network - MV** |  | 2026-01-23 | 2026-05-22 |  |
| RHD4PRLOLMAFMV1500 |  | Material Fabrication for Unit Substations - LOL-MV | 120d | 2026-01-23 | 2026-05-22 | RHD4PRLOLPOMV1500 |
| RHD4PRLOLMAFMV1600 |  | Material Fabrication for Ring Main Unit (RMU) - LOL-MV | 120d | 2026-01-23 | 2026-05-22 | RHD4PRLOLPOMV1600 |
|  | 132 | **RHD4-02-002-LOL-Manufacturing - MAF-Security Network - CCTV** |  | 2026-01-26 | 2026-04-25 |  |
| RHD4PRLOLMAFCCTV1000 |  | Material Fabrication for CCTV Control Room Components - LOL-MAF | 90d | 2026-01-26 | 2026-04-25 | RHD4PRLOLPOCCTV1000 |
|  | 133 | **RHD4-02-002-LOL-Manufacturing - MAF-Lift Stations - LFS** |  | 2026-01-25 | 2026-06-12 |  |
| RHD4PRLOLMAFLFS1400 |  | Material Fabrication for Odours scrubbing system - LOL-MAF | 120d | 2026-01-25 | 2026-05-24 | RHD4PRLOLPOLFS1400 |

| ID | WBS | Task | Duration | Start | Finish | Predecessors |
| --- | --- | --- | --- | --- | --- | --- |
| RHD4PRLOLMAFLFS1300 |  | Material Fabrication for Surge Tank - LOL-MAF | 120d | 2026-01-28 | 2026-05-27 | RHD4PRLOLPOLFS1300 |
| RHD4PRLOLMAFLFS1600 |  | Material Fabrication for Standby Diesel Generator - LOL-MAF | 120d | 2026-02-02 | 2026-06-01 | RHD4PRLOLPOLFS1600 |
| RHD4PRLOLMAFLFS1000 |  | Material Fabrication for Screening Container - LOL-MAF | 120d | 2026-02-04 | 2026-06-03 | RHD4PRLOLPOLFS1000 |
| RHD4PRLOLMAFLFS2000 |  | Material Fabrication for Isolation Penstock - LOL-DOS | 120d | 2026-02-04 | 2026-06-03 | RHD4PRLOLPOLFS2000 |
| RHD4PRLOLMAFLFS1200 |  | Material Fabrication for Magnetic type flowmeter - LOL-MAF | 120d | 2026-02-05 | 2026-06-04 | RHD4PRLOLPOLFS1200 |
| RHD4PRLOLMAFLFS1500 |  | Material Fabrication for JIB Crane - LOL-MAF | 120d | 2026-02-06 | 2026-06-05 | RHD4PRLOLPOLFS1500 |
| RHD4PRLOLMAFLFS1700 |  | Material Fabrication for Programmable Logic Controllers and Instrumentation for Process Systems - LOL-MAF | 120d | 2026-02-12 | 2026-06-11 | RHD4PRLOLPOLFS1700 |
| RHD4PRLOLMAFLFS1100 |  | Material Fabrication for Submersible pumps - LOL-MAF | 120d | 2026-02-13 | 2026-06-12 | RHD4PRLOLPOLFS1100 |
|  | 134 | **RHD4-02-002-Long Lead Items - LOL-Material Delivery on Site - DOS** |  | 2026-04-26 | 2026-06-26 |  |
|  | 1 | **RHD4-02-002-LOL-Material Delivery on Site - DOS -Medium Voltage Network - MV** |  | 2026-05-23 | 2026-06-05 |  |
| RHD4PRLOLDOSMV1500 |  | Delivery for Unit Substations - LOL-DOS | 14d | 2026-05-23 | 2026-06-05 | RHD4PRLOLMAFMV1500 |
| RHD4PRLOLDOSMV1600 |  | Delivery for Ring Main Unit (RMU) - LOL-DOS | 14d | 2026-05-23 | 2026-06-05 | RHD4PRLOLMAFMV1600 |
|  | 135 | **RHD4-02-002-LOL-Material Delivery on Site - DOS -Security Network - CCTV** |  | 2026-04-26 | 2026-05-09 |  |
| RHD4PRLOLDOSCCTV1000 |  | Delivery for CCTV Control Room Components - LOL-DOS | 14d | 2026-04-26 | 2026-05-09 | RHD4PRLOLMAFCCTV1000 |
|  | 136 | **RHD4-02-002-LOL-Material Delivery on Site - DOS -Lift Stations - LFS** |  | 2026-05-25 | 2026-06-26 |  |
| RHD4PRLOLDOSLFS1400 |  | Delivery for Odours scrubbing system - LOL-DOS | 14d | 2026-05-25 | 2026-06-07 | RHD4PRLOLMAFLFS1400 |
| RHD4PRLOLDOSLFS1300 |  | Delivery for Surge Tank - LOL-DOS | 14d | 2026-05-28 | 2026-06-10 | RHD4PRLOLMAFLFS1300 |
| RHD4PRLOLDOSLFS1600 |  | Delivery for Standby Diesel Generator - LOL-DOS | 14d | 2026-06-02 | 2026-06-15 | RHD4PRLOLMAFLFS1600 |
| RHD4PRLOLDOSLFS1000 |  | Delivery for Screening Container - LOL-DOS | 14d | 2026-06-04 | 2026-06-17 | RHD4PRLOLMAFLFS1000 |
| RHD4PRLOLDOSLFS2000 |  | Delivery for Isolation Penstock - LOL-DOS | 14d | 2026-06-04 | 2026-06-17 | RHD4PRLOLMAFLFS2000 |
| RHD4PRLOLDOSLFS1200 |  | Delivery for Magnetic type flowmeter - LOL-DOS | 14d | 2026-06-05 | 2026-06-18 | RHD4PRLOLMAFLFS1200 |
| RHD4PRLOLDOSLFS1500 |  | Delivery for JIB Crane - LOL-DOS | 14d | 2026-06-06 | 2026-06-19 | RHD4PRLOLMAFLFS1500 |
| RHD4PRLOLDOSLFS1700 |  | Delivery for Programmable Logic Controllers and Instrumentation for Process Systems - LOL-DOS | 14d | 2026-06-12 | 2026-06-25 | RHD4PRLOLMAFLFS1700 |
| RHD4PRLOLDOSLFS1100 |  | Delivery for Submersible pumps - LOL-DOS | 14d | 2026-06-13 | 2026-06-26 | RHD4PRLOLMAFLFS1100 |
|  | 1 | **RHD4-02-002-Long Lead Items - LOL-Stageing Time - STAG** |  | 2026-05-10 | 2026-07-02 |  |
|  | 1 | **RHD4-02-002-LOL-Material Delivery on Site - DOS -Medium Voltage Network - MV** |  | 2026-06-06 | 2026-06-11 |  |
| RHD4PRLOLSTAGMV1601 |  | Staging time for Unit Substations - LOL-STAG | 6d | 2026-06-06 | 2026-06-11 | RHD4PRLOLMAFMV1500, RHD4PRLOLDOSMV1500 |
| RHD4PRLOLSTAGMV1602 |  | Staging time for Ring Main Unit (RMU) - LOL-STAG | 6d | 2026-06-06 | 2026-06-11 | RHD4PRLOLMAFMV1600, RHD4PRLOLDOSMV1600 |
|  | 135 | **RHD4-02-002-LOL-Material Delivery on Site - DOS -Security Network - CCTV** |  | 2026-05-10 | 2026-05-15 |  |
| RHD4PRLOLSTACCTV1001 |  | Staging time for CCTV Control Room Components - LOL-STAG | 6d | 2026-05-10 | 2026-05-15 | RHD4PRLOLMAFCCTV1000, RHD4PRLOLDOSCCTV1000 |
|  | 136 | **RHD4-02-002-LOL-Material Delivery on Site - DOS -Lift Stations - LFS** |  | 2026-06-08 | 2026-07-02 |  |
| RHD4PRLOLSTAGLFS1400 |  | Staging time for Odours scrubbing system - LOL-STAG | 6d | 2026-06-08 | 2026-06-13 | RHD4PRLOLDOSLFS1400 |
| RHD4PRLOLSTAGLFS1300 |  | Staging time for Surge Tank - LOL-STAG | 6d | 2026-06-11 | 2026-06-16 | RHD4PRLOLDOSLFS1300 |
| RHD4PRLOLSTAGLFS1600 |  | Staging time for Standby Diesel Generator - LOL-STAG | 6d | 2026-06-16 | 2026-06-21 | RHD4PRLOLDOSLFS1600 |
| RHD4PRLOLSTAGLFS1000 |  | Staging time for Screening Container - LOL-STAG | 6d | 2026-06-18 | 2026-06-23 | RHD4PRLOLDOSLFS1000 |
| RHD4PRLOLSTAGLFS2000 |  | Staging time for Isolation Penstock - LOL-STAG | 6d | 2026-06-18 | 2026-06-23 | RHD4PRLOLDOSLFS2000 |
| RHD4PRLOLSTAGLFS1200 |  | Staging time for Magnetic type flowmeter - LOL-STAG | 6d | 2026-06-19 | 2026-06-24 | RHD4PRLOLDOSLFS1200 |
| RHD4PRLOLSTAGLFS1500 |  | Staging time for JIB Crane - LOL-STAG | 6d | 2026-06-20 | 2026-06-25 | RHD4PRLOLDOSLFS1500 |
| RHD4PRLOLSTAGLFS1700 |  | Staging time for Programmable Logic Controllers and Instrumentation for Process Systems - LOL-STAG | 6d | 2026-06-26 | 2026-07-01 | RHD4PRLOLDOSLFS1700 |
| RHD4PRLOLSTAGLFS1100 |  | Staging time for Submersible pumps - LOL-STAG | 6d | 2026-06-27 | 2026-07-02 | RHD4PRLOLDOSLFS1100 |
|  | 98 | **RHD4-02-002-Short Lead Items - SHL** |  | 2025-12-23 | 2026-09-03 |  |
|  | 99 | **RHD4-02-002-Short Lead Items - SHL-Material Purchase Order - PO** |  | 2025-12-23 | 2026-02-28 |  |
|  | 100 | **RHD4-02-002-SHL-Material Purchase Order - PO-Storm Network - ST** |  | 2025-12-31 | 2026-02-07 |  |
| RHD4PRSHLPOST1000 |  | Material Purchase Order for GRP pipes - SHL-ST | 11d | 2025-12-31 | 2026-01-12 | RHD4ENSWL1APPARC1100, RHD4ENSWL1APPMEC1200, RHD4ENSTL1APPARC1100, RHD4ENSTL1APPMEC1200, RHD4GNPERMITAT2000, RHD4ENTUN1APPSTC1100, RHD4ENTUN1APPSTC1200, RHD4ENSDZ9APPRD220, RHD4ENSDZ7APPRD220, RHD4ENSDZ5APPRD220, RHD4ENMARAPPST100 |
| RHD4PRSHLPOST1100 |  | Material Purchase Order for UPVC pipes - SHL-ST | 3d | 2026-01-01 | 2026-01-04 | RHD4ENMARAPPST200 |
| RHD4PRSHLPOST1300 |  | Material Purchase Order for Catch basin - SHL-ST | 6d | 2026-01-13 | 2026-01-19 | RHD4PRSHLPOST1100, RHD4PRSHLPOST1000, RHD4ENMARAPPST400 |
| RHD4PRSHLPOST1200 |  | Material Purchase Order for HDPE pipes - SHL-ST | 6d | 2026-01-18 | 2026-01-24 | RHD4PRSHLPOST1100, RHD4PRSHLPOST1000, RHD4ENMARAPPST300 |
| RHD4PRSHLPOST1600 |  | Material Purchase Order for Precast Concrete - SHL-ST | 6d | 2026-01-20 | 2026-01-26 | RHD4ENMARAPPST700 |
| RHD4PRSHLPOST1500 |  | Material Purchase Order for Tensile reinforcement steel - SHL-ST | 6d | 2026-01-25 | 2026-01-31 | RHD4ENMARAPPST600 |
| RHD4PRSHLPOST1700 |  | Material Purchase Order for Metal Works (Stairs - Manhole Covers) - SHL-ST | 6d | 2026-01-25 | 2026-01-31 | RHD4PRSHLPOST1300, RHD4ENMARAPPST800 |
| RHD4PRSHLPOST1400 |  | Material Purchase Order for Grouted Riprap - SHL-ST | 6d | 2026-02-01 | 2026-02-07 | RHD4PRSHLPOST1700, RHD4ENMARAPPST500 |
|  | 101 | **RHD4-02-002-SHL-Material Purchase Order - PO-Sewage Network - SW** |  | 2026-01-07 | 2026-02-03 |  |
| RHD4PRSHLPOSW1100 |  | Material Purchase Order for GRP pipes - SHL-SW | 6d | 2026-01-07 | 2026-01-13 | RHD4ENMARAPPSW200 |
| RHD4PRSHLPOSW1200 |  | Material Purchase Order for Valves - SHL-SW | 6d | 2026-01-14 | 2026-01-20 | RHD4ENMARAPPSW300 |
| RHD4PRSHLPOSW1000 |  | Material Purchase Order for UPVC pipes - SHL-SW | 6d | 2026-01-15 | 2026-01-21 | RHD4ENMARAPPSW100 |
| RHD4PRSHLPOSW1300 |  | Material Purchase Order for Precast Concrete - SHL-SW | 6d | 2026-01-20 | 2026-01-26 | RHD4ENMARAPPSW400 |
| RHD4PRSHLPOSW1400 |  | Material Purchase Order for Metal Works (Stairs - Manhole Covers) - SHL-SW | 6d | 2026-01-24 | 2026-01-29 | RHD4ENMARAPPSW500 |
| RHD4PRSHLPOSW1500 |  | Material Purchase Order for HDPE pipes - SHL-SW | 6d | 2026-01-28 | 2026-02-03 | RHD4ENMARAPPSW600 |
|  | 102 | **RHD4-02-002-SHL-Material Purchase Order - PO-Potable Water Network - PT** |  | 2025-12-25 | 2026-01-29 |  |
| RHD4PRSHLPOPT1200 |  | Material Purchase Order for Fire Hydrants - SHL-PT | 6d | 2025-12-25 | 2025-12-31 | RHD4ENMARAPPPT300 |
| RHD4PRSHLPOPT1300 |  | Material Purchase Order for Precast Concrete - SHL-PT | 6d | 2026-01-06 | 2026-01-12 | RHD4ENMARAPPPT400 |
| RHD4PRSHLPOPT1500 |  | Material Purchase Order for Metal Works (Chamber's Covers) - SHL-PT | 6d | 2026-01-06 | 2026-01-12 | RHD4ENMARAPPPT600 |
| RHD4PRSHLPOPT1000 |  | Material Purchase Order for HDPE pipes - SHL-PT | 6d | 2026-01-17 | 2026-01-22 | RHD4ENMARAPPPT100 |
| RHD4PRSHLPOPT1400 |  | Material Purchase Order for Stem and Surface box - SHL-PT | 6d | 2026-01-22 | 2026-01-28 | RHD4ENMARAPPPT500 |
| RHD4PRSHLPOPT1100 |  | Material Purchase Order for Valves - SHL-PT | 6d | 2026-01-24 | 2026-01-29 | RHD4ENMARAPPPT200 |
|  | 103 | **RHD4-02-002-SHL-Material Purchase Order - PO-Irrigation Network - IRR** |  | 2025-12-30 | 2026-02-01 |  |
| RHD4PRSHLPOIRR1200 |  | Material Purchase Order for Precast Concrete - SHL-IRR | 6d | 2025-12-30 | 2026-01-05 | RHD4ENMARAPPIRR300 |
| RHD4PRSHLPOIRR1400 |  | Material Purchase Order for Metal Works (Chamber's Covers) - SHL-IRR | 6d | 2026-01-07 | 2026-01-13 | RHD4ENMARAPPIRR500 |
| RHD4PRSHLPOIRR1000 |  | Material Purchase Order for HDPE pipes - SHL-IRR | 6d | 2026-01-18 | 2026-01-24 | RHD4ENMARAPPIRR100 |
| RHD4PRSHLPOIRR1300 |  | Material Purchase Order for Stem and Surface box - SHL-IRR | 6d | 2026-01-24 | 2026-01-29 | RHD4ENMARAPPIRR400 |

| ID | WBS | Task | Duration | Start | Finish | Predecessors |
| --- | --- | --- | --- | --- | --- | --- |
| RHD4PRSHLPOIRR1100 |  | Material Purchase Order for Valves - SHL-IRR | 6d | 2026-01-26 | 2026-02-01 | RHD4ENMARAPPIRR200 |
|  | 104 | **RHD4-02-002-SHL-Material Purchase Order - PO-Medium Voltage - MV** |  | 2025-12-31 | 2026-01-20 |  |
| RHD4PRSHLPOMV1000 |  | Material Purchase Order for UPVC Pipes for Duct Banks - SHL-MV | 17d | 2025-12-31 | 2026-01-19 | RHD4ENMARAPPMV100 |
| RHD4PRSHLPOMV1100 |  | Material Purchase Order for Medium Voltage Cable 3Cx500 mm2 - SHL-MV | 6d | 2026-01-14 | 2026-01-20 | RHD4ENMARAPPMV200 |
| RHD4PRSHLPOMV1200 |  | Material Purchase Order for Medium Voltage Cable 3Cx50 mm2 - SHL-MV | 6d | 2026-01-14 | 2026-01-20 | RHD4ENMARAPPMV300 |
| RHD4PRSHLPOMV1300 |  | Material Purchase Order for Straight Joints 3Cx50 mm2 - SHL-MV | 6d | 2026-01-14 | 2026-01-20 | RHD4ENMARAPPMV400 |
| RHD4PRSHLPOMV1400 |  | Material Purchase Order for Normally Open Points (Outdoor type) - SHL-MV | 6d | 2026-01-14 | 2026-01-20 | RHD4ENMARAPPMV500 |
|  | 105 | **RHD4-02-002-SHL-Material Purchase Order - PO-Low Voltage - LV** |  | 2025-12-30 | 2026-01-20 |  |
| RHD4PRSHLPOLV1400 |  | Material Purchase Order for Low Voltage Drawpit - SHL-LV | 6d | 2025-12-30 | 2026-01-05 | RHD4ENMARAPPLV500 |
| RHD4PRSHLPOLV1000 |  | Material Purchase Order for UPVC Pipes for Duct Banks - SHL-LV | 17d | 2026-01-01 | 2026-01-20 | RHD4ENMARAPPLV100 |
| RHD4PRSHLPOLV1100 |  | Material Purchase Order for Low voltage Cables - SHL-LV | 6d | 2026-01-06 | 2026-01-12 | RHD4ENMARAPPLV200 |
| RHD4PRSHLPOLV1200 |  | Material Purchase Order for Distribution Pillars - SHL-LV | 6d | 2026-01-13 | 2026-01-19 | RHD4ENMARAPPLV300 |
| RHD4PRSHLPOLV1300 |  | Material Purchase Order for KWH Meter mounting Frame - SHL-LV | 6d | 2026-01-13 | 2026-01-19 | RHD4ENMARAPPLV400 |
| RHD4PRSHLPOLV1500 |  | Material Purchase Order for Earthing for Pillars and Panels - SHL-LV | 6d | 2026-01-13 | 2026-01-19 | RHD4ENMARAPPLV600 |
|  | 106 | **RHD4-02-002-SHL-Material Purchase Order - PO-Street Lighting Network -SL** |  | 2026-01-06 | 2026-01-26 |  |
| RHD4PRSHLPOSL1000 |  | Material Purchase Order for UPVC Pipes for Duct Banks - SHL-SL | 16d | 2026-01-06 | 2026-01-24 | RHD4ENMARAPPSL100 |
| RHD4PRSHLPOSL1400 |  | Material Purchase Order for Street Lighting Drawpit - SHL-SL | 6d | 2026-01-07 | 2026-01-13 | RHD4ENMSSL2000, RHD4ENMARAPPSL500 |
| RHD4PRSHLPOSL1200 |  | Material Purchase Order for Lighting Poles - SHL-SL | 6d | 2026-01-10 | 2026-01-15 | RHD4ENMARAPPSL300 |
| RHD4PRSHLPOSL1100 |  | Material Purchase Order for Street Lighting Cables - SHL-SL | 6d | 2026-01-20 | 2026-01-26 | RHD4ENMARAPPSL200 |
| RHD4PRSHLPOSL1300 |  | Material Purchase Order for Street Lighting Luminaire - SHL-SL | 6d | 2026-01-20 | 2026-01-26 | RHD4ENMARAPPSL400 |
|  | 107 | **RHD4-02-002-SHL-Material Purchase Order - PO-Landscape Network - LS** |  |  |  |  |
|  | 108 | **RHD4-02-002-SHL-Material Purchase Order - PO-Telecommunications Network - TC** |  | 2026-01-25 | 2026-02-26 |  |
| RHD4PRSHLPOTC1100 |  | Material Purchase Order for HDPE Road Crossings Ducts - SHL-TC | 11d | 2026-01-25 | 2026-02-05 | RHD4PRSHLPOSL1000, RHD4ENMARAPPTC200 |
| RHD4PRSHLPOTC1000 |  | Material Purchase Order for HDPE Ducts - SHL-TC | 11d | 2026-02-07 | 2026-02-18 | RHD4PRSHLPOTC1100, RHD4ENMARAPPTC100 |
| RHD4PRSHLPOTC1200 |  | Material Purchase Order for Telecommunications Manhole - SHL-TC | 6d | 2026-02-19 | 2026-02-26 | RHD4PRSHLPOTC1000, RHD4ENMARAPPTC300 |
|  | 109 | **RHD4-02-002-SHL-Material Purchase Order - PO-Information and Communication Technologies - ICT** |  | 2026-01-25 | 2026-02-17 |  |
| RHD4PRSHLPOICT1100 |  | Material Purchase Order for HDPE Road Crossings Ducts - SHL-ICT | 7d | 2026-01-25 | 2026-02-01 | RHD4PRSHLPOSL1000, RHD4ENMARAPPICT200 |
| RHD4PRSHLPOICT1000 |  | Material Purchase Order for HDPE Ducts - SHL-ICT | 7d | 2026-02-02 | 2026-02-09 | RHD4PRSHLPOICT1100, RHD4ENMARAPPICT100 |
| RHD4PRSHLPOICT1200 |  | Material Purchase Order for Telecommunications Manhole - SHL-ICT | 7d | 2026-02-10 | 2026-02-17 | RHD4PRSHLPOICT1000, RHD4PRSHLPOSL1100, RHD4ENMARAPPICT300 |
|  | 110 | **RHD4-02-002-SHL-Material Purchase Order - PO-Security Network - CCTV** |  | 2026-01-29 | 2026-02-28 |  |
| RHD4PRSHLPOCCTV1000 |  | Material Purchase Order for CCTV Network Poles - SHL-CCTV | 6d | 2026-01-29 | 2026-02-04 | RHD4PRSHLPOLV1000, RHD4ENMARAPPCCTV100 |
| RHD4PRSHLPOCCTV1200 |  | Material Purchase Order for CCTV Panels and Panel's Components - SHL-CCTV | 6d | 2026-02-05 | 2026-02-11 | RHD4PRSHLPOCCTV1000, RHD4ENMARAPPCCTV300 |
| RHD4PRSHLPOCCTV1300 |  | Material Purchase Order for CCTV Fiber Optic Cables - SHL-CCTV | 6d | 2026-02-12 | 2026-02-18 | RHD4PRSHLPOCCTV1200, RHD4ENMARAPPCCTV400 |
| RHD4PRSHLPOCCTV1100 |  | Material Purchase Order for CCTV Network Cameras - SHL-CCTV | 7d | 2026-02-19 | 2026-02-28 | RHD4PRSHLPOCCTV1300, RHD4ENMSRR2010, RHD4ENMSER2010, RHD4ENMSASPH2010, RHD4ENSWL1APPELE1300, RHD4ENMARAPPCCTV200 |
|  | 111 | **RHD4-02-002-SHL-Material Purchase Order - PO-Road Works - RD** |  | 2025-12-30 | 2026-02-17 |  |
| RHD4PRSHLPORD1000 |  | Material Purchase Order for Aggregate Base Courses - SHL-RD | 6d | 2025-12-30 | 2026-01-05 | RHD4ENMARAPPRD100 |
| RHD4PRSHLPORD1100 |  | Material Purchase Order for Bituminous Asphalt Layers - SHL-RD | 6d | 2026-01-06 | 2026-01-12 | RHD4PRSHLPORD1000, RHD4ENMARAPPRD200 |
| RHD4PRSHLPORD1200 |  | Material Purchase Order for Precast Concrete Curbstone - SHL-RD | 6d | 2026-01-13 | 2026-01-19 | RHD4PRSHLPORD1100, RHD4ENMARAPPRD300 |
| RHD4PRSHLPORD1600 |  | Material Purchase Order for Traffic Signage - SHL-RD | 6d | 2026-01-20 | 2026-01-26 | RHD4PRSHLPORD1200, RHD4ENMARAPPRD700 |
| RHD4PRSHLPORD1300 |  | Material Purchase Order for Interlock Precast Concrete Unit Paving - SHL-RD | 6d | 2026-01-28 | 2026-02-03 | RHD4PRSHLPORD1600, RHD4ENMARAPPRD400 |
| RHD4PRSHLPORD1400 |  | Material Purchase Order for Wheel Stopper - SHL-RD | 6d | 2026-02-04 | 2026-02-10 | RHD4PRSHLPORD1300, RHD4ENMARAPPRD500 |
| RHD4PRSHLPORD1500 |  | Material Purchase Order for Pavement Marking - SHL-RD | 6d | 2026-02-11 | 2026-02-17 | RHD4PRSHLPORD1400, RHD4ENMARAPPRD600 |
|  | 112 | **RHD4-02-002-SHL-Material Purchase Order - PO-Lift Stations - LFS** |  | 2025-12-23 | 2026-02-02 |  |
| RHD4PRSHLPOLFS3000 |  | Material Purchase Order for Fire Alarm System - SHL-LFS | 6d | 2025-12-23 | 2025-12-29 | RHD4ENMARAPPLFS2900 |
| RHD4PRSHLPOLFS1400 |  | Material Purchase Order for Metal Doors and Access Doors and Frames - SHL-LFS | 6d | 2025-12-27 | 2026-01-01 | RHD4ENMARAPPLFS500 |
| RHD4PRSHLPOLFS2800 |  | Material Purchase Order for Wiring Devices - SHL-LFS | 6d | 2025-12-27 | 2026-01-01 | RHD4ENMARAPPLFS2600 |
| RHD4PRSHLPOLFS2900 |  | Material Purchase Order for Enclosed Switches and Circuit Breakers - SHL-LFS | 6d | 2025-12-27 | 2026-01-01 | RHD4ENMARAPPLFS2700 |
| RHD4PRSHLPOLFS1700 |  | Material Purchase Order for Ductile Iron Pipes & Fittings - SHL-LFS | 6d | 2025-12-30 | 2026-01-05 | RHD4ENMARAPPLFS800 |
| RHD4PRSHLPOLFS2100 |  | Material Purchase Order for UPVC Pipes for Sanitary Drain - SHL-LFS | 6d | 2025-12-30 | 2026-01-05 | RHD4ENMARAPPLFS1800 |
| RHD4PRSHLPOLFS1100 |  | Material Purchase Order for Roof Waterproofing System - SHL-LFS | 6d | 2025-12-31 | 2026-01-06 | RHD4ENMARAPPLFS200 |
| RHD4PRSHLPOLFS2500 |  | Material Purchase Order for Earthing for Lift Stations - SHL-LFS | 6d | 2026-01-03 | 2026-01-08 | RHD4ENMARAPPLFS2200 |
| RHD4PRSHLPOLFS1500 |  | Material Purchase Order for Painting - SHL-LFS | 6d | 2026-01-04 | 2026-01-10 | RHD4ENMARAPPLFS600 |
| RHD4PRSHLPOLFS2300 |  | Material Purchase Order for Motor Control Center (MCC) - SHL-LFS | 12d | 2026-01-04 | 2026-01-17 | RHD4ENMARAPPLFS2000 |
| RHD4PRSHLPOLFS1800 |  | Material Purchase Order for Sewage Lift Station Valves - SHL-LFS | 6d | 2026-01-06 | 2026-01-12 | RHD4PRSHLPOLFS1700, RHD4ENMARAPPLFS900 |
| RHD4PRSHLPOLFS1200 |  | Material Purchase Order for Bituminous Sheet Waterproofing - SHL-LFS | 6d | 2026-01-08 | 2026-01-14 | RHD4PRSHLPOLFS1100, RHD4ENMARAPPLFS300 |
| RHD4PRSHLPOLFS3100 |  | Material Purchase Order for Fences and Gates - SHL-LFS | 6d | 2026-01-11 | 2026-01-17 | RHD4ENMARAPPLFS3000, RHD4PRSHLPOLFS2900 |
| RHD4PRSHLPOLFS2600 |  | Material Purchase Order for Low Voltage Cables - SHL-LFS | 6d | 2026-01-13 | 2026-01-19 | RHD4PRSHLPOLFS1800, RHD4ENMARAPPLFS2400 |
| RHD4PRSHLPOLFS2400 |  | Material Purchase Order for lighting and power panel boards - SHL-LFS | 6d | 2026-01-15 | 2026-01-21 | RHD4ENMARAPPLFS2100 |
| RHD4PRSHLPOLFS1600 |  | Material Purchase Order for Epoxy Coating - SHL-LFS | 6d | 2026-01-18 | 2026-01-24 | RHD4ENMARAPPLFS700 |
| RHD4PRSHLPOLFS2200 |  | Material Purchase Order for wall mounted Split/AC - SHL-LFS | 6d | 2026-01-19 | 2026-01-25 | RHD4ENMARAPPLFS1900 |
| RHD4PRSHLPOLFS1300 |  | Material Purchase Order for Fluid-Applied Waterproofing - SHL-LFS | 6d | 2026-01-20 | 2026-01-26 | RHD4PRSHLPOLFS1200, RHD4ENSTL1APPELE1300, RHD4ENMARAPPLFS400 |
| RHD4PRSHLPOLFS1900 |  | Material Purchase Order for Basket screen - SHL-LFS | 6d | 2026-01-21 | 2026-01-27 | RHD4ENMARAPPLFS1400 |
| RHD4PRSHLPOLFS1000 |  | Material Purchase Order for Metal Ladder and checkered Plate - SHL-LFS | 6d | 2026-01-26 | 2026-02-01 | RHD4ENMARAPPLFS100 |
| RHD4PRSHLPOLFS2700 |  | Material Purchase Order for Lighting Fixtures - SHL-LFS | 6d | 2026-01-27 | 2026-02-02 | RHD4ENMARAPPLFS2500 |
|  | 113 | **RHD4-02-002-Short Lead Items - SHL-Material Delivery on Site - DOS** |  | 2025-12-30 | 2026-08-28 |  |
|  | 114 | **RHD4-02-002-SHL-Material Delivery on Site - DOS -Storm Network - ST** |  | 2026-01-05 | 2026-08-28 |  |
|  | 1 | **RHD4-02-002-SHL-Material Delivery on Site - DOS -Storm Network - ST - Zone 1** |  | 2026-01-27 | 2026-08-22 |  |
| RHD4PRSHLDOSST1600 |  | Delivery for Precast Concrete Zone 1 - SHL-DOS | 6d | 2026-01-27 | 2026-02-01 | RHD4PRSHLPOST1600 |
| RHD4PRSHLDOSST1700 |  | Delivery for Metal Works (Stairs - Manhole Covers) Zone 1 - SHL-DOS | 6d | 2026-02-01 | 2026-02-06 | RHD4PRSHLPOST1700 |
| RHD4PRSHLDOSST1100 |  | Delivery for UPVC pipes Zone 1 - SHL-DOS | 6d | 2026-02-02 | 2026-02-07 | RHD4PRSHLDOSST1600, RHD4PRSHLPOST1100 |

| ID | WBS | Task | Duration | Start | Finish | Predecessors |
| --- | --- | --- | --- | --- | --- | --- |
| RHD4PRSHLDOSST1400 |  | Delivery for Grouted Riprap Zone 1 - SHL-DOS | 6d | 2026-02-08 | 2026-02-13 | RHD4PRSHLPOST1400 |
| RHD4PRSHLDOSST1000 |  | Delivery for GRP pipes Zone 1 - SHL-DOS(Completed) | 30d | 2026-07-18 | 2026-08-16 | RHD4PRSHLDOSST1306, RHD4PRSHLDOSST1001 SS, RHD4CZ6A015ST3501, RHD4CZ5A014ST3501, RHD4CZ3L122RW2000, RHD4PRSHLSTAGSL1100, RHD4PRSHLPOST1000 |
| RHD4PRSHLDOSST1300 |  | Delivery for Catch basin Zone 1 - SHL-DOS | 6d | 2026-08-17 | 2026-08-22 | RHD4PRSHLDOSST1600, RHD4PRSHLPOST1000, RHD4PRSHLDOSST1000, RHD4PRSHLPOST1300 |
|  | 2 | **RHD4-02-002-SHL-Material Delivery on Site - DOS -Storm Network - ST - Zone 2** |  | 2026-01-05 | 2026-08-22 |  |
| RHD4PRSHLDOSST1101 |  | Delivery for UPVC pipes Zone 2 - SHL-DOS | 6d | 2026-01-05 | 2026-01-10 | RHD4PRSHLPOST1100 |
| RHD4PRSHLDOSST1601 |  | Delivery for Precast Concrete Zone 2 - SHL-DOS | 6d | 2026-01-27 | 2026-02-01 | RHD4PRSHLPOST1600 |
| RHD4PRSHLDOSST1501 |  | Delivery for Tensile reinforcement steel Zone 2 - SHL-DOS | 6d | 2026-02-01 | 2026-02-06 | RHD4PRSHLPOST1500 |
| RHD4PRSHLDOSST1701 |  | Delivery for Metal Works (Stairs - Manhole Covers) Zone 2 - SHL-DOS | 6d | 2026-02-01 | 2026-02-06 | RHD4PRSHLPOST1700 |
| RHD4PRSHLDOSST1401 |  | Delivery for Grouted Riprap Zone 2 - SHL-DOS | 6d | 2026-02-08 | 2026-02-13 | RHD4PRSHLPOST1400 |
| RHD4PRSHLDOSST1001 |  | Delivery for GRP pipes Zone 2 - SHL-DOS(Completed) | 30d | 2026-07-18 | 2026-08-16 | RHD4PRSHLPOST1000, RHD4PRSHLSTAGST1003, RHD4PRSHLDOSST1702, RHD4PRSHLDOSST1302 |
| RHD4PRSHLDOSST1301 |  | Delivery for Catch basin Zone 2 - SHL-DOS | 6d | 2026-08-17 | 2026-08-22 | RHD4PRSHLPOST1300, RHD4PRSHLDOSST1101, RHD4PRSHLPOST1000, RHD4PRSHLDOSST1001 |
|  | 3 | **RHD4-02-002-SHL-Material Delivery on Site - DOS -Storm Network - ST - Zone 3** |  | 2026-01-27 | 2026-07-17 |  |
| RHD4PRSHLDOSST1602 |  | Delivery for Precast Concrete Zone 3 - SHL-DOS | 6d | 2026-01-27 | 2026-02-01 | RHD4PRSHLPOST1600 |
| RHD4PRSHLDOSST1702 |  | Delivery for Metal Works (Stairs - Manhole Covers) Zone 3 - SHL-DOS | 6d | 2026-02-01 | 2026-02-06 | RHD4PRSHLPOST1700 |
| RHD4PRSHLDOSST1102 |  | Delivery for UPVC pipes Zone 3 - SHL-DOS | 6d | 2026-02-02 | 2026-02-07 | RHD4PRSHLPOST1100, RHD4PRSHLDOSST1602 |
| RHD4PRSHLDOSST1302 |  | Delivery for Catch basin Zone 3 - SHL-DOS | 6d | 2026-07-12 | 2026-07-17 | RHD4PRSHLPOST1300, RHD4PRSHLDOSST1602, RHD4PRSHLPOST1000, RHD4PRSHLDOSST1008 SS, RHD4PRSHLDOSST1608, RHD4PRSHLDOSST1008, RHD4PRSHLDOSST1604, RHD4PRSHLDOSST1004, RHD4PRSHLDOSST1003 |
|  | 4 | **RHD4-02-002-SHL-Material Delivery on Site - DOS -Storm Network - ST - Zone 4** |  | 2026-01-20 | 2026-07-11 |  |
| RHD4PRSHLDOSST1303 |  | Delivery for Catch basin Zone 4 - SHL-DOS | 6d | 2026-01-20 | 2026-01-25 | RHD4PRSHLPOST1300 |
| RHD4PRSHLDOSST1603 |  | Delivery for Precast Concrete Zone 4 - SHL-DOS | 6d | 2026-01-27 | 2026-02-01 | RHD4PRSHLPOST1600 |
| RHD4PRSHLDOSST1703 |  | Delivery for Metal Works (Stairs - Manhole Covers) Zone 4 - SHL-DOS | 6d | 2026-02-01 | 2026-02-06 | RHD4PRSHLPOST1700, RHD4PRSHLDOSST1303 |
| RHD4PRSHLDOSST1103 |  | Delivery for UPVC pipes Zone 4 - SHL-DOS | 6d | 2026-02-02 | 2026-02-07 | RHD4PRSHLPOST1100, RHD4PRSHLDOSST1603 |
| RHD4PRSHLDOSST1003 |  | Delivery for GRP pipes Zone 4 - SHL-DOS(Completed) | 30d | 2026-06-12 | 2026-07-11 | RHD4PRSHLPOST1000, RHD4PRSHLDOSST1008 |
|  | 5 | **RHD4-02-002-SHL-Material Delivery on Site - DOS -Storm Network - ST - Zone 5** |  | 2026-01-05 | 2026-03-19 |  |
| RHD4PRSHLDOSST1104 |  | Delivery for UPVC pipes Zone 5 - SHL-DOS | 6d | 2026-01-05 | 2026-01-10 | RHD4PRSHLPOST1100 |
| RHD4PRSHLDOSST1604 |  | Delivery for Precast Concrete Zone 5 - SHL-DOS | 6d | 2026-01-27 | 2026-02-01 | RHD4PRSHLPOST1600 |
| RHD4PRSHLDOSST1704 |  | Delivery for Metal Works (Stairs - Manhole Covers) Zone 5 - SHL-DOS | 6d | 2026-02-01 | 2026-02-06 | RHD4PRSHLPOST1700 |
| RHD4PRSHLDOSST1504 |  | Delivery for Tensile reinforcement steel Zone 5 - SHL-DOS | 6d | 2026-02-07 | 2026-02-12 | RHD4PRSHLPOST1500, RHD4PRSHLDOSST1501 |
| RHD4PRSHLDOSST1004 |  | Delivery for GRP pipes Zone 5 - SHL-DOS(Completed) | 30d | 2026-02-12 | 2026-03-13 | RHD4PRSHLPOST1000, RHD4PRSHLDOSST1005, RHD4PRSHLSTAGST1600, RHD4PRSHLSTAGST1101, RHD4PRSHLSTAGST1607, RHD4PRSHLSTAGSW1300, RHD4PRSHLSTAGSW1301, RHD4PRSHLSTAGSW1003, RHD4PRSHLSTAPTCr1000, RHD4PRSHLSTAGLFS1100, RHD4PRSHLSTAGLFS1300, RHD4PRSHLSTAGLFS1400, RHD4PRSHLSTAGLFS1500, RHD4PRSHLSTAGLFS1600, RHD4PRSHLSTAGLFS1700, RHD4PRSHLSTAGLFS1800, RHD4PRSHLSTAGLFS1900, RHD4PRSHLSTAGLFS2100, RHD4PRSHLSTAGLFS2200, RHD4PRSHLSTAGLFS2300, RHD4PRSHLSTAGLFS2500, RHD4PRSHLSTAGLFS2600, RHD4PRSHLSTAGLFS2800, RHD4PRSHLSTAGLFS2900, RHD4PRSHLSTAGLFS3100, RHD4PRSHLPOSL1200, RHD4PRSHLPOSL1400, RHD4PRSHLSTAGLS1000, RHD4PRSHLSTAGLFS2400, RHD4PRSHLSTAGLFS1200, RHD4PRSHLSTAGSW1407, RHD4PRSHLSTAGSW1404, RHD4PRSHLSTAGSW1308, RHD4PRSHLSTAGSW1408, RHD4PRSHLSTAGSW1401, RHD4PRSHLSTAGST1602, RHD4PRSHLSTAGST1603, RHD4PRSHLSTAGST1303, RHD4PRSHLSTAGST1606, RHD4PRSHLSTAIRRC1000, RHD4PRSHLSTAGST1601, RHD4PRSHLSTAGRD1600, RHD4PRSHLSTAGRD1200, RHD4CZ8L04RW3000, RHD4CZ9L06RW3000, RHD4CZ6RA01RA3000, RHD4PRSHLSTAGMV1000, RHD4PRSHLSTAGST1105, RHD4PRSHLSTAGMV1400, RHD4PRSHLSTAGPT1200, RHD4PRSHLSTAGLV1200, RHD4PRSHLSTAGLV1300, RHD4PRSHLSTAGLV1000, RHD4PRSHLSTAGSW1305, RHD4PRSHLSTAGLV1100, RHD4PRSHLSTAGST1305, RHD4PRSHLSTAGMV1300, RHD4PRSHLSTAGMV1100, RHD4PRSHLSTAGMV1200, RHD4PRSHLSTAGST1605, RHD4PRSHLSTAGRD1100, RHD4PRSHLSTAGRD1000, RHD4CZ6C062RW3000, RHD4PRSHLSTAGIRR1000, RHD4PRSHLSTAGST1104, RHD4PRSHLSTAGST1604 |
| RHD4PRSHLDOSST1204 |  | Delivery for HDPE pipes Zone 5 - SHL-DOS | 6d | 2026-03-14 | 2026-03-19 | RHD4PRSHLPOST1200, RHD4PRSHLDOSST1104, RHD4PRSHLDOSST1604, RHD4PRSHLPOST1000, RHD4PRSHLDOSST1004 |
| RHD4PRSHLDOSST1304 |  | Delivery for Catch basin Zone 5 - SHL-DOS | 6d | 2026-03-14 | 2026-03-19 | RHD4PRSHLPOST1300, RHD4PRSHLDOSST1104, RHD4PRSHLDOSST1604, RHD4PRSHLPOST1000, RHD4PRSHLDOSST1004 |
|  | 6 | **RHD4-02-002-SHL-Material Delivery on Site - DOS -Storm Network - ST - Zone 6** |  | 2026-01-05 | 2026-02-11 |  |
| RHD4PRSHLDOSST1105 |  | Delivery for UPVC pipes Zone 6 - SHL-DOS | 6d | 2026-01-05 | 2026-01-10 | RHD4PRSHLPOST1100 |
| RHD4PRSHLDOSST1005 |  | Delivery for GRP pipes Zone 6 - SHL-DOS(Completed) | 30d | 2026-01-13 | 2026-02-11 | RHD4PRSHLPOST1000, RHD4PRSHLSTAGLFS3000, RHD4PRSHLPOLV1400, RHD4GNPERMITENV3000, RHD4PRSHLPOPT1200 |
| RHD4PRSHLDOSST1305 |  | Delivery for Catch basin Zone 6 - SHL-DOS | 6d | 2026-01-20 | 2026-01-25 | RHD4PRSHLPOST1300 |
| RHD4PRSHLDOSST1605 |  | Delivery for Precast Concrete Zone 6 - SHL-DOS | 6d | 2026-01-27 | 2026-02-01 | RHD4PRSHLPOST1600 |
| RHD4PRSHLDOSST1705 |  | Delivery for Metal Works (Stairs - Manhole Covers) Zone 6 - SHL-DOS | 6d | 2026-02-01 | 2026-02-06 | RHD4PRSHLPOST1700 |
|  | 8 | **RHD4-02-002-SHL-Material Delivery on Site - DOS -Storm Network - ST - Zone 7** |  | 2026-01-27 | 2026-04-18 |  |
| RHD4PRSHLDOSST1606 |  | Delivery for Precast Concrete Zone 7 - SHL-DOS | 6d | 2026-01-27 | 2026-02-01 | RHD4PRSHLPOST1600 |
| RHD4PRSHLDOSST1106 |  | Delivery for UPVC pipes Zone 7 - SHL-DOS | 6d | 2026-02-02 | 2026-02-07 | RHD4PRSHLPOST1100, RHD4PRSHLDOSST1606, RHD4PRSHLDOSST1105 |
| RHD4PRSHLDOSST1206 |  | Delivery for HDPE pipes Zone 7 - SHL-DOS | 6d | 2026-02-02 | 2026-02-07 | RHD4PRSHLPOST1200, RHD4PRSHLDOSST1606 |
| RHD4PRSHLDOSST1706 |  | Delivery for Metal Works (Stairs - Manhole Covers) Zone 7 - SHL-DOS | 6d | 2026-02-07 | 2026-02-12 | RHD4PRSHLPOST1700, RHD4PRSHLDOSST1705 |
| RHD4PRSHLDOSST1006 |  | Delivery for GRP pipes Zone 7 - SHL-DOS(Completed) | 30d | 2026-03-14 | 2026-04-12 | RHD4PRSHLPOST1000, RHD4PRSHLDOSST1005 SS, RHD4PRSHLDOSST1004, RHD4CZ9C071RW3000, RHD4CZ9L02RW3000, RHD4PRSHLSTAGST1100, RHD4PRSHLSTAGST1401, RHD4PRSHLSTAGST1102, RHD4PRSHLSTAGST1107, RHD4PRSHLSTAGST1707, RHD4PRSHLSTAGSW1000, RHD4PRSHLSTAGSW1400, RHD4PRSHLSTAGSW1001, RHD4PRSHLSTAGSW1007, RHD4PRSHLSTAGSW1008, RHD4PRSHLSTAGLFS1000, RHD4PRSHLSTAGLFS2700, RHD4PRSHLSTAGST1702, RHD4PRSHLSTAGSW1103, RHD4PRSHLSTAGSW1504, RHD4PRSHLSTAGSW1108, RHD4PRSHLSTAGLV1500, RHD4PRSHLSTAGSW1405, RHD4PRSHLSTAGST1706, RHD4PRSHLSTAGST1708, RHD4PRSHLSTAPTCr1300, RHD4PRSHLSTAGST1705, RHD4PRSHLSTAGST1701, RHD4PRSHLSTAGST1504, RHD4PRSHLSTAGST1306, RHD4CZ8RA04RA3000, RHD4PRSHLSTAGST1608, RHD4PRSHLSTAGST1703, RHD4PRSHLSTAGST1103, RHD4PRSHLSTAGSW1406, RHD4PRSHLSTAGSW1306, RHD4PRSHLSTAGRD1300, RHD4PRSHLSTAGRD1400, RHD4PRSHLSTAGRD1500, RHD4PRSHLSTAGST1106, RHD4PRSHLSTAGST1501, RHD4PRSHLSTACCTV1200, RHD4PRSHLSTACCTV1100, RHD4PRSHLSTACCTV1300, RHD4PRSHLSTAGST1400, RHD4PRSHLSTACCTV1000, RHD4CZ7C032RW3000, RHD4PRSHLSTAGICT1200, RHD4PRSHLSTAGST1700, RHD4PRSHLSTAGPT1500, RHD4PRSHLSTAGPT1400, RHD4PRSHLSTAGST1108, RHD4PRSHLSTAGST1005, RHD4PRSHLSTAGSW1005, RHD4PRSHLSTAGIRR1200, RHD4PRSHLSTAGIRR1100, RHD4PRSHLSTAGSW1104, RHD4PRSHLSTAGSW1004, RHD4PRSHLSTAGST1704 |
| RHD4PRSHLDOSST1306 |  | Delivery for Catch basin Zone 7 - SHL-DOS | 6d | 2026-04-13 | 2026-04-18 | RHD4PRSHLPOST1300, RHD4PRSHLDOSST1305, RHD4PRSHLDOSST1606, RHD4PRSHLPOST1000, RHD4PRSHLDOSST1006, RHD4PRSHLDOSST1605, RHD4PRSHLDOSST1005, RHD4CZ2C082RW2000, RHD4CZ7A012RW3000, RHD4CZ4RA02RA3000, RHD4CZ7L03RW3000, RHD4PRSHLSTAGST1304, RHD4CZ5RA07RA3000, RHD4PRSHLSTAGST1004 |
|  | 7 | **RHD4-02-002-SHL-Material Delivery on Site - DOS -Storm Network - ST - Zone 8** |  | 2026-01-27 | 2026-05-18 |  |
| RHD4PRSHLDOSST1607 |  | Delivery for Precast Concrete Zone 8 - SHL-DOS | 6d | 2026-01-27 | 2026-02-01 | RHD4PRSHLPOST1600 |
| RHD4PRSHLDOSST1107 |  | Delivery for UPVC pipes Zone 8 - SHL-DOS | 6d | 2026-02-02 | 2026-02-07 | RHD4PRSHLPOST1100, RHD4PRSHLDOSST1607 |
| RHD4PRSHLDOSST1707 |  | Delivery for Metal Works (Stairs - Manhole Covers) Zone 8 - SHL-DOS | 6d | 2026-02-07 | 2026-02-12 | RHD4PRSHLPOST1700, RHD4PRSHLDOSST1704 |
| RHD4PRSHLDOSST1007 |  | Delivery for GRP pipes Zone 8 - SHL-DOS(Completed) | 30d | 2026-04-13 | 2026-05-12 | RHD4PRSHLPOST1000, RHD4PRSHLDOSST1006 |
| RHD4PRSHLDOSST1307 |  | Delivery for Catch basin Zone 8 - SHL-DOS | 6d | 2026-05-13 | 2026-05-18 | RHD4PRSHLPOST1300, RHD4PRSHLDOSST1107, RHD4PRSHLDOSST1607, RHD4PRSHLPOST1000, RHD4PRSHLDOSST1007 |
|  | 9 | **RHD4-02-002-SHL-Material Delivery on Site - DOS -Storm Network - ST - Zone 9** |  | 2026-02-01 | 2026-08-28 |  |
| RHD4PRSHLDOSST1708 |  | Delivery for Metal Works (Stairs - Manhole Covers) Zone 9 - SHL-DOS | 6d | 2026-02-01 | 2026-02-06 | RHD4PRSHLPOST1700 |
| RHD4PRSHLDOSST1608 |  | Delivery for Precast Concrete Zone 9 - SHL-DOS | 6d | 2026-02-02 | 2026-02-07 | RHD4PRSHLPOST1600, RHD4PRSHLDOSST1604 |
| RHD4PRSHLDOSST1108 |  | Delivery for UPVC pipes Zone 9 - SHL-DOS | 6d | 2026-02-08 | 2026-02-13 | RHD4PRSHLPOST1100, RHD4PRSHLDOSST1608, RHD4PRSHLDOSST1104 |
| RHD4PRSHLDOSST1008 |  | Delivery for GRP pipes Zone 9 - SHL-DOS(Completed) | 30d | 2026-05-13 | 2026-06-11 | RHD4PRSHLPOST1000, RHD4PRSHLDOSST1004 SS, RHD4PRSHLDOSST1007, RHD4CZ3C011RW2000, RHD4PRSHLSTAGSW1304, RHD4CZ1C081RW2000, RHD4CZ7C02ST4600 |
| RHD4PRSHLDOSST1308 |  | Delivery for Catch basin Zone 9 - SHL-DOS | 6d | 2026-08-23 | 2026-08-28 | RHD4PRSHLPOST1300, RHD4PRSHLDOSST1300 |
|  | 115 | **RHD4-02-002-SHL-Material Delivery on Site - DOS -Sewage Network - SW** |  | 2026-01-14 | 2026-05-18 |  |
|  | 1 | **RHD4-02-002-SHL-Material Delivery on Site - DOS -Sewage Network - SW - Zone 1** |  | 2026-01-27 | 2026-02-24 |  |
| RHD4PRSHLDOSSW1300 |  | Delivery for Precast Concrete Zone 1 - SHL-DOS | 6d | 2026-01-27 | 2026-02-01 | RHD4PRSHLPOSW1300 |
| RHD4PRSHLDOSSW1000 |  | Delivery for UPVC pipes Zone 1 - SHL-DOS | 6d | 2026-02-13 | 2026-02-18 | RHD4PRSHLDOSSW1103, RHD4PRSHLPOSW1000 |
| RHD4PRSHLDOSSW1400 |  | Delivery for Metal Works (Stairs - Manhole Covers) Zone 1 - SHL-DOS | 6d | 2026-02-19 | 2026-02-24 | RHD4PRSHLDOSSW1000, RHD4PRSHLPOSW1400 |
|  | 2 | **RHD4-02-002-SHL-Material Delivery on Site - DOS -Sewage Network - SW - Zone 2** |  | 2026-01-27 | 2026-02-13 |  |
| RHD4PRSHLDOSSW1301 |  | Delivery for Precast Concrete Zone 2 - SHL-DOS | 6d | 2026-01-27 | 2026-02-01 | RHD4PRSHLPOSW1300 |
| RHD4PRSHLDOSSW1401 |  | Delivery for Metal Works (Stairs - Manhole Covers) Zone 2 - SHL-DOS | 6d | 2026-01-30 | 2026-02-04 | RHD4PRSHLPOSW1400 |
| RHD4PRSHLDOSSW1101 |  | Delivery for GRP pipes Zone 2 - SHL-DOS | 6d | 2026-02-02 | 2026-02-07 | RHD4PRSHLPOSW1100, RHD4PRSHLDOSSW1301 |
| RHD4PRSHLDOSSW1001 |  | Delivery for UPVC pipes Zone 2 - SHL-DOS | 6d | 2026-02-08 | 2026-02-13 | RHD4PRSHLPOSW1000, RHD4PRSHLDOSSW1101 |
|  | 3 | **RHD4-02-002-SHL-Material Delivery on Site - DOS -Sewage Network - SW - Zone 3** |  | 2026-01-14 | 2026-02-09 |  |
| RHD4PRSHLDOSSW1102 |  | Delivery for GRP pipes Zone 3 - SHL-DOS | 6d | 2026-01-14 | 2026-01-19 | RHD4PRSHLPOSW1100 |
| RHD4PRSHLDOSSW1202 |  | Delivery for Valves Zone 3 - SHL-DOS | 6d | 2026-01-21 | 2026-01-26 | RHD4PRSHLPOSW1200, RHD4PRSHLDOSSW1102 |
| RHD4PRSHLDOSSW1302 |  | Delivery for Precast Concrete Zone 3 - SHL-DOS | 6d | 2026-01-27 | 2026-02-01 | RHD4PRSHLPOSW1300 |
| RHD4PRSHLDOSSW1402 |  | Delivery for Metal Works (Stairs - Manhole Covers) Zone 3 - SHL-DOS | 6d | 2026-01-30 | 2026-02-04 | RHD4PRSHLPOSW1400 |

| ID | WBS | Task | Duration | Start | Finish | Predecessors |
| --- | --- | --- | --- | --- | --- | --- |
| RHD4PRSHLDOSSW1502 |  | Delivery for HDPE pipes Zone 3 - SHL-DOS | 6d | 2026-02-04 | 2026-02-09 | RHD4PRSHLPOSW1500 |
|  | 4 | **RHD4-02-002-SHL-Material Delivery on Site - DOS -Sewage Network - SW - Zone 4** |  | 2026-01-14 | 2026-02-12 |  |
| RHD4PRSHLDOSSW1103 |  | Delivery for GRP pipes Zone 4 - SHL-DOS(Completed) | 30d | 2026-01-14 | 2026-02-12 | RHD4PRSHLPOSW1100 |
| RHD4PRSHLDOSSW1203 |  | Delivery for Valves Zone 4 - SHL-DOS | 6d | 2026-01-21 | 2026-01-26 | RHD4PRSHLPOSW1200 |
| RHD4PRSHLDOSSW1003 |  | Delivery for UPVC pipes Zone 4 - SHL-DOS | 6d | 2026-01-22 | 2026-01-27 | RHD4PRSHLPOSW1000 |
| RHD4PRSHLDOSSW1403 |  | Delivery for Metal Works (Stairs - Manhole Covers) Zone 4 - SHL-DOS | 6d | 2026-01-30 | 2026-02-04 | RHD4PRSHLPOSW1400, RHD4PRSHLDOSSW1003 |
| RHD4PRSHLDOSSW1303 |  | Delivery for Precast Concrete Zone 4 - SHL-DOS | 6d | 2026-02-02 | 2026-02-07 | RHD4PRSHLPOSW1300, RHD4PRSHLDOSSW1304 |
|  | 7 | **RHD4-02-002-SHL-Material Delivery on Site - DOS -Sewage Network - SW - Zone 5** |  | 2026-01-14 | 2026-02-26 |  |
| RHD4PRSHLDOSSW1104 |  | Delivery for GRP pipes Zone 5 - SHL-DOS(Completed) | 25d | 2026-01-14 | 2026-02-07 | RHD4PRSHLPOSW1100 |
| RHD4PRSHLDOSSW1004 |  | Delivery for UPVC pipes Zone 5 - SHL-DOS(Completed) | 30d | 2026-01-22 | 2026-02-20 | RHD4PRSHLPOSW1000, RHD4PRSHLDOSSW1104 SS |
| RHD4PRSHLDOSSW1304 |  | Delivery for Precast Concrete Zone 5 - SHL-DOS | 6d | 2026-01-27 | 2026-02-01 | RHD4PRSHLPOSW1300 |
| RHD4PRSHLDOSSW1404 |  | Delivery for Metal Works (Stairs - Manhole Covers) Zone 5 - SHL-DOS | 6d | 2026-01-30 | 2026-02-04 | RHD4PRSHLPOSW1400 |
| RHD4PRSHLDOSSW1504 |  | Delivery for HDPE pipes Zone 5 - SHL-DOS | 6d | 2026-02-04 | 2026-02-09 | RHD4PRSHLPOSW1500 |
| RHD4PRSHLDOSSW1204 |  | Delivery for Valves Zone 5 - SHL-DOS | 6d | 2026-02-21 | 2026-02-26 | RHD4PRSHLPOSW1200, RHD4PRSHLPOSW1000, RHD4PRSHLDOSSW1004, RHD4PRSHLDOSSW1304, RHD4PRSHLPOSW1100, RHD4PRSHLDOSSW1104 |
|  | 5 | **RHD4-02-002-SHL-Material Delivery on Site - DOS -Sewage Network - SW - Zone 6** |  | 2026-01-22 | 2026-02-26 |  |
| RHD4PRSHLDOSSW1005 |  | Delivery for UPVC pipes Zone 6 - SHL-DOS(Completed) | 30d | 2026-01-22 | 2026-02-20 | RHD4PRSHLPOSW1000, RHD4PRSHLDOSSW1004 SS |
| RHD4PRSHLDOSSW1305 |  | Delivery for Precast Concrete Zone 6 - SHL-DOS | 6d | 2026-01-27 | 2026-02-01 | RHD4PRSHLPOSW1300 |
| RHD4PRSHLDOSSW1405 |  | Delivery for Metal Works (Stairs - Manhole Covers) Zone 6 - SHL-DOS | 6d | 2026-02-21 | 2026-02-26 | RHD4PRSHLPOSW1400, RHD4PRSHLDOSSW1305, RHD4PRSHLPOSW1000, RHD4PRSHLDOSSW1005, RHD4PRSHLDOSSW1004, RHD4PRSHLDOSSW1304, RHD4PRSHLPOSW1100, RHD4PRSHLDOSSW1104 |
|  | 8 | **RHD4-02-002-SHL-Material Delivery on Site - DOS -Sewage Network - SW - Zone 7** |  | 2026-01-21 | 2026-05-18 |  |
| RHD4PRSHLDOSSW1206 |  | Delivery for Valves Zone 7 - SHL-DOS | 6d | 2026-01-21 | 2026-01-26 | RHD4PRSHLPOSW1200 |
| RHD4PRSHLDOSSW1306 |  | Delivery for Precast Concrete Zone 7 - SHL-DOS | 6d | 2026-02-02 | 2026-02-07 | RHD4PRSHLPOSW1300, RHD4PRSHLDOSSW1304 |
| RHD4PRSHLDOSSW1506 |  | Delivery for HDPE pipes Zone 7 - SHL-DOS | 6d | 2026-02-04 | 2026-02-09 | RHD4PRSHLPOSW1500 |
| RHD4PRSHLDOSSW1406 |  | Delivery for Metal Works (Stairs - Manhole Covers) Zone 7 - SHL-DOS | 6d | 2026-02-05 | 2026-02-10 | RHD4PRSHLPOSW1400, RHD4PRSHLDOSSW1206, RHD4PRSHLDOSSW1404 |
| RHD4PRSHLDOSSW1006 |  | Delivery for UPVC pipes Zone 7 - SHL-DOS(Completed) | 30d | 2026-04-19 | 2026-05-18 | RHD4PRSHLPOSW1000, RHD4PRSHLDOSSW1106 SS, RHD4PRSHLDOSSW1004 SS |
| RHD4PRSHLDOSSW1106 |  | Delivery for GRP pipes Zone 7 - SHL-DOS(Completed) | 30d | 2026-04-19 | 2026-05-18 | RHD4PRSHLPOSW1100, RHD4PRSHLDOSST1306 |
|  | 6 | **RHD4-02-002-SHL-Material Delivery on Site - DOS -Sewage Network - SW - Zone 8** |  | 2026-01-14 | 2026-02-26 |  |
| RHD4PRSHLDOSSW1107 |  | Delivery for GRP pipes Zone 8 - SHL-DOS | 15d | 2026-01-14 | 2026-01-28 | RHD4PRSHLPOSW1100 |
| RHD4PRSHLDOSSW1307 |  | Delivery for Precast Concrete Zone 8 - SHL-DOS | 6d | 2026-01-27 | 2026-02-01 | RHD4PRSHLPOSW1300 |
| RHD4PRSHLDOSSW1407 |  | Delivery for Metal Works (Stairs - Manhole Covers) Zone 8 - SHL-DOS | 6d | 2026-01-30 | 2026-02-04 | RHD4PRSHLPOSW1400 |
| RHD4PRSHLDOSSW1007 |  | Delivery for UPVC pipes Zone 8 - SHL-DOS | 6d | 2026-02-21 | 2026-02-26 | RHD4PRSHLPOSW1000, RHD4PRSHLDOSSW1107, RHD4PRSHLDOSSW1305, RHD4PRSHLDOSSW1005, RHD4PRSHLDOSSW1004, RHD4PRSHLDOSSW1304, RHD4PRSHLPOSW1100, RHD4PRSHLDOSSW1104 |
|  | 9 | **RHD4-02-002-SHL-Material Delivery on Site - DOS -Sewage Network - SW - Zone 9** |  | 2026-01-14 | 2026-02-28 |  |
| RHD4PRSHLDOSSW1108 |  | Delivery for GRP pipes Zone 9 - SHL-DOS(Completed) | 40d | 2026-01-14 | 2026-02-22 | RHD4PRSHLPOSW1100 |
| RHD4PRSHLDOSSW1308 |  | Delivery for Precast Concrete Zone 9 - SHL-DOS | 6d | 2026-01-27 | 2026-02-01 | RHD4PRSHLPOSW1300 |
| RHD4PRSHLDOSSW1408 |  | Delivery for Metal Works (Stairs - Manhole Covers) Zone 9 - SHL-DOS | 6d | 2026-01-30 | 2026-02-04 | RHD4PRSHLPOSW1400 |
| RHD4PRSHLDOSSW1008 |  | Delivery for UPVC pipes Zone 9 - SHL-DOS | 6d | 2026-02-23 | 2026-02-28 | RHD4PRSHLPOSW1000, RHD4PRSHLDOSSW1308, RHD4PRSHLPOSW1100, RHD4PRSHLDOSSW1108 |
|  | 116 | **RHD4-02-002-SHL-Material Delivery on Site - DOS -Potable Water Network - PT** |  | 2026-01-13 | 2026-06-05 |  |
|  | 1 | **RHD4-02-002-SHL-Material Delivery on Site - DOS -Potable Water Network - PT - Crossings** |  | 2026-01-13 | 2026-02-10 |  |
| RHD4PRSHLDOSPTCr1100 |  | Delivery for Precast Concrete - PTCr - SHL-DOS | 6d | 2026-01-13 | 2026-01-18 | RHD4PRSHLPOPT1300 |
| RHD4PRSHLDOSPTCr1400 |  | Delivery for Metal Works (Chamber's Covers) - PTCr - SHL-DOS | 6d | 2026-01-13 | 2026-01-18 | RHD4PRSHLPOPT1500 |
| RHD4PRSHLDOSPTCr1000 |  | Delivery for HDPE pipes - PTCr - SHL-DOS | 6d | 2026-01-23 | 2026-01-28 | RHD4PRSHLPOPT1000 |
| RHD4PRSHLDOSPTCr1300 |  | Delivery for Stem and Surface box - PTCr - SHL-DOS | 6d | 2026-01-29 | 2026-02-03 | RHD4PRSHLPOPT1400 |
| RHD4PRSHLDOSPTCr1200 |  | Delivery for Valves - PTCr - SHL-DOS | 6d | 2026-01-30 | 2026-02-04 | RHD4PRSHLPOPT1100 |
| RHD4PRSHLDOSPTCr1500 |  | Delivery for Fire Hydrants - PTCr - SHL-DOS | 6d | 2026-02-05 | 2026-02-10 | RHD4PRSHLDOSPTCr1200, RHD4PRSHLPOPT1200 |
|  | 2 | **RHD4-02-002-SHL-Material Delivery on Site - DOS -Potable Water Network - PT - Network** |  | 2026-01-30 | 2026-06-05 |  |
| RHD4PRSHLDOSPT1200 |  | Delivery for Valves - PT - SHL-DOS | 6d | 2026-01-30 | 2026-02-04 | RHD4PRSHLPOPT1100 |
| RHD4PRSHLDOSPT1400 |  | Delivery for Metal Works (Chamber's Covers) - PT - SHL-DOS | 6d | 2026-02-05 | 2026-02-10 | RHD4PRSHLPOPT1500, RHD4PRSHLDOSPT1200 |
| RHD4PRSHLDOSPT1500 |  | Delivery for Fire Hydrants - PT - SHL-DOS | 6d | 2026-02-05 | 2026-02-10 | RHD4PRSHLDOSPT1200, RHD4PRSHLPOPT1200, RHD4ENMARAPPEW100 |
| RHD4PRSHLDOSPT1000 |  | Delivery for HDPE pipes - PT - SHL-DOS | 6d | 2026-05-19 | 2026-05-24 | RHD4PRSHLSTAGST1007, RHD4PRSHLPOPT1000, RHD4PRSHLDOSSW1106, RHD4CZ6C062ST4700, RHD4PRLOLSTACCTV1001 |
| RHD4PRSHLDOSPT1100 |  | Delivery for Precast Concrete - PT - SHL-DOS | 6d | 2026-05-25 | 2026-05-30 | RHD4PRSHLDOSPT1000, RHD4CZ5L08RW2000 |
| RHD4PRSHLDOSPT1300 |  | Delivery for Stem and Surface box - PT - SHL-DOS | 6d | 2026-05-31 | 2026-06-05 | RHD4PRSHLDOSPT1100, RHD4PRSHLPOPT1400, RHD4PRSHLSTAGSW1006, RHD4PRSHLSTAGSW1106, RHD4PRSHLSTAGST1307 |
|  | 117 | **RHD4-02-002-SHL-Material Delivery on Site - DOS -Irrigation Network - IRR** |  | 2026-01-25 | 2026-06-11 |  |
|  | 1 | **RHD4-02-002-SHL-Material Delivery on Site - DOS -Irrigation Network - IRR - Crossings** |  | 2026-01-25 | 2026-02-19 |  |
| RHD4PRSHLDOSIRRC1000 |  | Delivery for HDPE pipes - IRRC - SHL-DOS | 6d | 2026-01-25 | 2026-01-30 | RHD4PRSHLPOIRR1000 |
| RHD4PRSHLDOSIRRC1200 |  | Delivery for Precast Concrete - IRRC - SHL-DOS | 6d | 2026-01-31 | 2026-02-05 | RHD4PRSHLDOSIRRC1000, RHD4PRSHLPOIRR1200 |
| RHD4PRSHLDOSIRRC1100 |  | Delivery for Valves - IRRC - SHL-DOS | 6d | 2026-02-02 | 2026-02-07 | RHD4PRSHLPOIRR1100 |
| RHD4PRSHLDOSIRRC1300 |  | Delivery for Stem and Surface box - IRRC - SHL-DOS | 6d | 2026-02-08 | 2026-02-13 | RHD4PRSHLDOSIRRC1100, RHD4PRSHLPOIRR1300 |
| RHD4PRSHLDOSIRRC1400 |  | Delivery for Metal Works (Chamber's Covers) - IRRC - SHL-DOS | 6d | 2026-02-14 | 2026-02-19 | RHD4PRSHLDOSIRRC1300, RHD4PRSHLPOIRR1400 |
|  | 2 | **RHD4-02-002-SHL-Material Delivery on Site - DOS -Irrigation Network - IRR - Network** |  | 2026-01-25 | 2026-06-11 |  |
| RHD4PRSHLDOSIRR1000 |  | Delivery for HDPE pipes - IRR - SHL-DOS | 6d | 2026-01-25 | 2026-01-30 | RHD4PRSHLPOIRR1000 |
| RHD4PRSHLDOSIRR1200 |  | Delivery for Precast Concrete - IRR - SHL-DOS | 6d | 2026-01-31 | 2026-02-05 | RHD4PRSHLPOIRR1200, RHD4PRSHLDOSIRR1000 |
| RHD4PRSHLDOSIRR1100 |  | Delivery for Valves - IRR - SHL-DOS | 6d | 2026-02-02 | 2026-02-07 | RHD4PRSHLPOIRR1100 |
| RHD4PRSHLDOSIRR1300 |  | Delivery for Stem and Surface box - IRR - SHL-DOS | 6d | 2026-06-06 | 2026-06-11 | RHD4PRSHLPOIRR1300, RHD4PRSHLDOSIRR1100, RHD4PRSHLDOSPT1300, RHD4CZ6A015ICT3100, RHD4PRSHLSTAGPT1000 |
| RHD4PRSHLDOSIRR1400 |  | Delivery for Metal Works (Chamber's Covers) - IRR - SHL-DOS | 6d | 2026-06-06 | 2026-06-11 | RHD4PRSHLPOIRR1400, RHD4PRSHLDOSPT1300 |
|  | 118 | **RHD4-02-002-SHL-Material Delivery on Site - DOS -Medium Voltage - MV** |  | 2026-01-20 | 2026-01-26 |  |
| RHD4PRSHLDOSMV1000 |  | Delivery for UPVC Pipes for Duct Banks - SHL-DOS | 6d | 2026-01-20 | 2026-01-25 | RHD4PRSHLPOMV1000 |
| RHD4PRSHLDOSMV1100 |  | Delivery for Medium Voltage Cable 3Cx500 mm2 - SHL-DOS | 6d | 2026-01-21 | 2026-01-26 | RHD4PRSHLPOMV1100 |
| RHD4PRSHLDOSMV1200 |  | Delivery for Medium Voltage Cable 3Cx50 mm2 - SHL-DOS | 6d | 2026-01-21 | 2026-01-26 | RHD4PRSHLPOMV1200 |
| RHD4PRSHLDOSMV1300 |  | Delivery for Straight Joints 3Cx50 mm2 - SHL-DOS | 6d | 2026-01-21 | 2026-01-26 | RHD4PRSHLPOMV1300 |
| RHD4PRSHLDOSMV1400 |  | Delivery for Normally Open Points (Outdoor type) - SHL-DOS | 6d | 2026-01-21 | 2026-01-26 | RHD4PRSHLPOMV1400 |
|  | 119 | **RHD4-02-002-SHL-Material Delivery on Site - DOS -Low Voltage - LV** |  | 2026-01-13 | 2026-06-17 |  |

| ID | WBS | Task | Duration | Start | Finish | Predecessors |
| --- | --- | --- | --- | --- | --- | --- |
| RHD4PRSHLDOSLV1100 |  | Delivery for Low voltage Cables - SHL-DOS | 6d | 2026-01-13 | 2026-01-18 | RHD4PRSHLPOLV1100 |
| RHD4PRSHLDOSLV1200 |  | Delivery for Distribution Pillars - SHL-DOS | 6d | 2026-01-20 | 2026-01-25 | RHD4PRSHLPOLV1200 |
| RHD4PRSHLDOSLV1300 |  | Delivery for KWH Meter mounting Frame - SHL-DOS | 6d | 2026-01-20 | 2026-01-25 | RHD4PRSHLPOLV1300 |
| RHD4PRSHLDOSLV1500 |  | Delivery for Earthing for Pillars and Panels - SHL-DOS | 6d | 2026-01-20 | 2026-01-25 | RHD4PRSHLPOLV1500 |
| RHD4PRSHLDOSLV1000 |  | Delivery for UPVC Pipes for Duct Banks - SHL-DOS | 6d | 2026-01-21 | 2026-01-26 | RHD4PRSHLPOLV1000 |
| RHD4PRSHLDOSLV1400 |  | Delivery for Low Voltage Drawpit - SHL-DOS | 6d | 2026-06-12 | 2026-06-17 | RHD4PRSHLDOSLV1000, RHD4PRSHLDOSIRR1300, RHD4CZ6A015TC3400, RHD4PRSHLSTAGPT1100, RHD4PRSHLPOLV1400 |
|  | 120 | **RHD4-02-002-SHL-Material Delivery on Site - DOS -Street Lighting Network -SL** |  | 2026-06-18 | 2026-07-17 |  |
| RHD4PRSHLDOSSL1400 |  | Delivery for Street Lighting Drawpit - SHL-DOS | 6d | 2026-06-18 | 2026-06-23 | RHD4ENMSSL2000, RHD4PRSHLDOSLV1400, RHD4PRSHLDOSLV1400 FF, RHD4PRLOLSTAGLFS1300, RHD4PRSHLPOSL1400 |
| RHD4PRSHLDOSSL1200 |  | Delivery for Lighting Poles - SHL-DOS | 6d | 2026-06-24 | 2026-06-29 | RHD4PRSHLDOSLV1100 SS, RHD4PRSHLDOSSL1400, RHD4CZ6A015ST7300, RHD4PRLOLSTAGLFS1600, RHD4CZ4C012RW2000, RHD4PRSHLPOSL1200 |
| RHD4PRSHLDOSSL1100 |  | Delivery for Street Lighting Cables - SHL-DOS | 6d | 2026-06-30 | 2026-07-05 | RHD4PRSHLDOSSL1200, RHD4PRSHLDOSSL1200 FF, RHD4PRSHLPOSL1100 |
| RHD4PRSHLDOSSL1300 |  | Delivery for Street Lighting Luminaire - SHL-DOS | 6d | 2026-07-06 | 2026-07-11 | RHD4PRSHLDOSSL1100, RHD4PRLOLSTAGLFS1100, RHD4PRLOLSTAGLFS1700, RHD4PRSHLPOSL1300 |
| RHD4PRSHLDOSSL1000 |  | Delivery for UPVC Pipes for Duct Banks - SHL-DOS | 6d | 2026-07-12 | 2026-07-17 | RHD4PRSHLDOSLV1000, RHD4PRSHLDOSSL1300, RHD4PRSHLPOSL1000 |
|  | 121 | **RHD4-02-002-SHL-Material Delivery on Site - DOS -Landscape Network - LS** |  |  |  |  |
|  | 122 | **RHD4-02-002-SHL-Material Delivery on Site - DOS -Telecommunications Network - TC** |  | 2026-07-18 | 2026-08-04 |  |
| RHD4PRSHLDOSTC1100 |  | Delivery for HDPE Road Crossings Ducts - SHL-DOS | 6d | 2026-07-18 | 2026-07-23 | RHD4PRSHLSTAGSL1300, RHD4PRSHLDOSSL1000, RHD4PRSHLPOTC1100 |
| RHD4PRSHLDOSTC1000 |  | Delivery for HDPE Ducts - SHL-DOS | 6d | 2026-07-24 | 2026-07-29 | RHD4CTUN1Z5STG21170, RHD4PRSHLDOSTC1100, RHD4PRSHLPOTC1000 |
| RHD4PRSHLDOSTC1200 |  | Delivery for Telecommunications Manhole - SHL-DOS | 6d | 2026-07-30 | 2026-08-04 | RHD4PRSHLDOSTC1000, RHD4CZ6C062ST3502, RHD4PRSHLPOTC1200 |
|  | 123 | **RHD4-02-002-SHL-Material Delivery on Site - DOS -Information and Communication Technologies - ICT** |  | 2026-02-18 | 2026-08-16 |  |
| RHD4PRSHLDOSICT1200 |  | Delivery for Telecommunications Manhole - SHL-DOS | 6d | 2026-02-18 | 2026-02-23 | RHD4PRSHLPOICT1200 |
| RHD4PRSHLDOSICT1100 |  | Delivery for HDPE Road Crossings Ducts - SHL-DOS | 6d | 2026-08-05 | 2026-08-10 | RHD4PRSHLDOSTC1200, RHD4PRSHLPOICT1100 |
| RHD4PRSHLDOSICT1000 |  | Delivery for HDPE Ducts - SHL-DOS | 6d | 2026-08-11 | 2026-08-16 | RHD4PRSHLDOSICT1100, RHD4CZ6A02SW3500, RHD4CZ5L016ST1503, RHD4PRSHLPOICT1000 |
|  | 124 | **RHD4-02-002-SHL-Material Delivery on Site - DOS -Security Network - CCTV** |  | 2026-02-05 | 2026-03-06 |  |
| RHD4PRSHLDOSCCTV1000 |  | Delivery for CCTV Network Poles - SHL-DOS | 6d | 2026-02-05 | 2026-02-10 | RHD4PRSHLPOCCTV1000 |
| RHD4PRSHLDOSCCTV1200 |  | Delivery for CCTV Panels and Panel's Components - SHL-DOS | 6d | 2026-02-12 | 2026-02-17 | RHD4PRSHLPOCCTV1200 |
| RHD4PRSHLDOSCCTV1300 |  | Delivery for CCTV Fiber Optic Cables - SHL-DOS | 6d | 2026-02-19 | 2026-02-24 | RHD4PRSHLPOCCTV1300 |
| RHD4PRSHLDOSCCTV1100 |  | Delivery for CCTV Network Cameras - SHL-DOS | 6d | 2026-03-01 | 2026-03-06 | RHD4PRSHLPOTC1200, RHD4PRSHLPOCCTV1100 |
|  | 125 | **RHD4-02-002-SHL-Material Delivery on Site - DOS -Road Works - RD** |  | 2026-01-06 | 2026-02-23 |  |
| RHD4PRSHLDOSRD1000 |  | Delivery for Aggregate Base Courses - SHL-DOS | 6d | 2026-01-06 | 2026-01-11 | RHD4PRSHLPORD1000 |
| RHD4PRSHLDOSRD1100 |  | Delivery for Bituminous Asphalt Layers - SHL-DOS | 6d | 2026-01-13 | 2026-01-18 | RHD4PRSHLPORD1100 |
| RHD4PRSHLDOSRD1200 |  | Delivery for Precast Concrete Curbstone - SHL-DOS | 6d | 2026-01-20 | 2026-01-25 | RHD4PRSHLPORD1200 |
| RHD4PRSHLDOSRD1600 |  | Delivery for Traffic Signage - SHL-DOS | 6d | 2026-01-27 | 2026-02-01 | RHD4PRSHLPORD1600 |
| RHD4PRSHLDOSRD1300 |  | Delivery for Interlock Precast Concrete Unit Paving - SHL-DOS | 6d | 2026-02-04 | 2026-02-09 | RHD4PRSHLPORD1300 |
| RHD4PRSHLDOSRD1400 |  | Delivery for Wheel Stopper - SHL-DOS | 6d | 2026-02-11 | 2026-02-16 | RHD4PRSHLPORD1400 |
| RHD4PRSHLDOSRD1500 |  | Delivery for Pavement Marking - SHL-DOS | 6d | 2026-02-18 | 2026-02-23 | RHD4PRSHLPORD1500 |
|  | 126 | **RHD4-02-002-SHL-Material Delivery on Site - DOS -Lift Stations - LFS** |  | 2025-12-30 | 2026-02-08 |  |
| RHD4PRSHLDOSLFS3000 |  | Delivery for Fire Alarm System - SHL-DOS | 6d | 2025-12-30 | 2026-01-04 | RHD4PRSHLPOLFS3000 |
| RHD4PRSHLDOSLFS1400 |  | Delivery for Metal Doors and Access Doors and Frames - SHL-DOS | 6d | 2026-01-02 | 2026-01-07 | RHD4PRSHLPOLFS1400 |
| RHD4PRSHLDOSLFS2800 |  | Delivery for Wiring Devices - SHL-DOS | 6d | 2026-01-02 | 2026-01-07 | RHD4PRSHLPOLFS2800 |
| RHD4PRSHLDOSLFS2900 |  | Delivery for Enclosed Switches and Circuit Breakers - SHL-DOS | 6d | 2026-01-02 | 2026-01-07 | RHD4PRSHLPOLFS2900 |
| RHD4PRSHLDOSLFS1700 |  | Delivery for Ductile Iron Pipes & Fittings - SHL-DOS | 6d | 2026-01-06 | 2026-01-11 | RHD4PRSHLPOLFS1700 |
| RHD4PRSHLDOSLFS2100 |  | Delivery for UPVC Pipes for Sanitary Drain - SHL-DOS | 6d | 2026-01-06 | 2026-01-11 | RHD4PRSHLPOLFS2100 |
| RHD4PRSHLDOSLFS1100 |  | Delivery for Roof Waterproofing System - SHL-DOS | 6d | 2026-01-07 | 2026-01-12 | RHD4PRSHLPOLFS1100 |
| RHD4PRSHLDOSLFS2500 |  | Delivery for Earthing for Lift Stations - SHL-DOS | 6d | 2026-01-09 | 2026-01-14 | RHD4PRSHLPOLFS2500 |
| RHD4PRSHLDOSLFS1500 |  | Delivery for Painting - SHL-DOS | 6d | 2026-01-11 | 2026-01-16 | RHD4PRSHLPOLFS1500 |
| RHD4PRSHLDOSLFS1800 |  | Delivery for Sewage Lift Station Valves - SHL-DOS | 6d | 2026-01-13 | 2026-01-18 | RHD4PRSHLPOLFS1800 |
| RHD4PRSHLDOSLFS1200 |  | Delivery for Bituminous Sheet Waterproofing - SHL-DOS | 6d | 2026-01-15 | 2026-01-20 | RHD4PRSHLPOLFS1200 |
| RHD4PRSHLDOSLFS2300 |  | Delivery for Motor Control Center (MCC) - SHL-DOS | 6d | 2026-01-18 | 2026-01-23 | RHD4PRSHLPOLFS2300 |
| RHD4PRSHLDOSLFS3100 |  | Delivery for Fences and Gates - SHL-DOS | 6d | 2026-01-18 | 2026-01-23 | RHD4PRSHLPOLFS3100 |
| RHD4PRSHLDOSLFS2600 |  | Delivery for Low Voltage Cables - SHL-DOS | 6d | 2026-01-20 | 2026-01-25 | RHD4PRSHLPOLFS2600 |
| RHD4PRSHLDOSLFS2400 |  | Delivery for lighting and power panel boards - SHL-DOS | 6d | 2026-01-22 | 2026-01-27 | RHD4PRSHLPOLFS2400 |
| RHD4PRSHLDOSLFS1600 |  | Delivery for Epoxy Coating - SHL-DOS | 6d | 2026-01-25 | 2026-01-30 | RHD4PRSHLPOLFS1600 |
| RHD4PRSHLDOSLFS2200 |  | Delivery for wall mounted Split/AC - SHL-DOS | 6d | 2026-01-26 | 2026-01-31 | RHD4PRSHLPOLFS2200 |
| RHD4PRSHLDOSLFS1300 |  | Delivery for Fluid-Applied Waterproofing - SHL-DOS | 6d | 2026-01-27 | 2026-02-01 | RHD4PRSHLPOLFS1300 |
| RHD4PRSHLDOSLFS1900 |  | Delivery for Basket screen - SHL-DOS | 6d | 2026-01-28 | 2026-02-02 | RHD4PRSHLPOLFS1900 |
| RHD4PRSHLDOSLFS1000 |  | Delivery for Metal Ladder and checkered Plate - SHL-DOS | 6d | 2026-02-02 | 2026-02-07 | RHD4PRSHLPOLFS1000 |
| RHD4PRSHLDOSLFS2700 |  | Delivery for Lighting Fixtures - SHL-DOS | 6d | 2026-02-03 | 2026-02-08 | RHD4PRSHLPOLFS2700 |
|  | 1 | **RHD4-02-002-Short Lead Items - SHL-Staging Time - STAG** |  | 2026-01-05 | 2026-09-03 |  |
|  | 114 | **RHD4-02-002-SHL-Staging Time - STAG -Storm Network - ST** |  | 2026-01-11 | 2026-09-03 |  |
|  | 1 | **RHD4-02-002-SHL-Staging Time - STAG -Storm Network - ST - Zone 1** |  | 2026-02-02 | 2026-08-28 |  |
| RHD4PRSHLSTAGST1600 |  | Staging for Precast Concrete Zone 1 - SHL-STAG | 6d | 2026-02-02 | 2026-02-07 | RHD4PRSHLDOSST1600 |
| RHD4PRSHLSTAGST1700 |  | Staging for Metal Works (Stairs - Manhole Covers) Zone 1 - SHL-STAG | 6d | 2026-02-07 | 2026-02-12 | RHD4PRSHLDOSST1700 |
| RHD4PRSHLSTAGST1100 |  | Staging for UPVC pipes Zone 1 - SHL-STAG | 6d | 2026-02-08 | 2026-02-13 | RHD4PRSHLDOSST1100 |
| RHD4PRSHLSTAGST1400 |  | Staging for Grouted Riprap Zone 1 - SHL-STAG | 6d | 2026-02-14 | 2026-02-19 | RHD4PRSHLDOSST1400 |
| RHD4PRSHLSTAGST1000 |  | Staging for GRP pipes Zone 1 - SHL-STAG | 6d | 2026-08-17 | 2026-08-22 | RHD4PRSHLDOSST1600, RHD4PRSHLPOST1000, RHD4PRSHLDOSST1000 |
| RHD4PRSHLSTAGST1300 |  | Staging for Catch basin Zone 1 - SHL-STAG | 6d | 2026-08-23 | 2026-08-28 | RHD4PRSHLDOSST1300 |
|  | 2 | **RHD4-02-002-SHL-Staging Time - STAG -Storm Network - ST - Zone 2** |  | 2026-01-11 | 2026-08-28 |  |
| RHD4PRSHLSTAGST1101 |  | Staging for UPVC pipes Zone 2 - SHL-STAG | 6d | 2026-01-11 | 2026-01-16 | RHD4PRSHLDOSST1101 |
| RHD4PRSHLSTAGST1601 |  | Staging for Precast Concrete Zone 2 - SHL-STAG | 6d | 2026-02-02 | 2026-02-07 | RHD4PRSHLDOSST1601 |
| RHD4PRSHLSTAGST1501 |  | Staging for Tensile reinforcement steel Zone 2 - SHL-STAG | 6d | 2026-02-07 | 2026-02-12 | RHD4PRSHLDOSST1501 |
| RHD4PRSHLSTAGST1701 |  | Staging for Metal Works (Stairs - Manhole Covers) Zone 2 - SHL-STAG | 6d | 2026-02-07 | 2026-02-12 | RHD4PRSHLDOSST1701 |

| ID | WBS | Task | Duration | Start | Finish | Predecessors |
| --- | --- | --- | --- | --- | --- | --- |
| RHD4PRSHLSTAGST1401 |  | Staging for Grouted Riprap Zone 2 - SHL-STAG | 6d | 2026-02-14 | 2026-02-19 | RHD4PRSHLDOSST1401 |
| RHD4PRSHLSTAGST1001 |  | Staging for GRP pipes Zone 2 - SHL-STAG | 6d | 2026-08-17 | 2026-08-22 | RHD4PRSHLPOST1000, RHD4PRSHLDOSST1001 |
| RHD4PRSHLSTAGST1301 |  | Staging for Catch basin Zone 2 - SHL-STAG | 6d | 2026-08-23 | 2026-08-28 | RHD4PRSHLDOSST1301 |
|  | 3 | **RHD4-02-002-SHL-Staging Time - STAG -Storm Network - ST - Zone 3** |  | 2026-02-02 | 2026-07-23 |  |
| RHD4PRSHLSTAGST1602 |  | Staging for Precast Concrete Zone 3 - SHL-STAG | 6d | 2026-02-02 | 2026-02-07 | RHD4PRSHLDOSST1602 |
| RHD4PRSHLSTAGST1702 |  | Staging for Metal Works (Stairs - Manhole Covers) Zone 3 - SHL-STAG | 6d | 2026-02-07 | 2026-02-12 | RHD4PRSHLDOSST1702 |
| RHD4PRSHLSTAGST1102 |  | Staging for UPVC pipes Zone 3 - SHL-STAG | 6d | 2026-02-08 | 2026-02-13 | RHD4PRSHLDOSST1102 |
| RHD4PRSHLSTAGST1002 |  | Staging for GRP pipes Zone 3 - SHL-STAG | 6d | 2026-06-12 | 2026-06-17 | RHD4PRSHLDOSST1602, RHD4PRSHLPOST1000, RHD4PRSHLDOSST1008 SS, RHD4PRSHLDOSST1608, RHD4PRSHLDOSST1008, RHD4PRSHLDOSST1604, RHD4PRSHLDOSST1004 |
| RHD4PRSHLSTAGST1302 |  | Staging for Catch basin Zone 3 - SHL-STAG | 6d | 2026-07-18 | 2026-07-23 | RHD4PRSHLDOSST1302 |
|  | 4 | **RHD4-02-002-SHL-Staging Time - STAG -Storm Network - ST - Zone 4** |  | 2026-01-26 | 2026-07-17 |  |
| RHD4PRSHLSTAGST1303 |  | Staging for Catch basin Zone 4 - SHL-STAG | 6d | 2026-01-26 | 2026-01-31 | RHD4PRSHLDOSST1303 |
| RHD4PRSHLSTAGST1603 |  | Staging for Precast Concrete Zone 4 - SHL-STAG | 6d | 2026-02-02 | 2026-02-07 | RHD4PRSHLDOSST1603 |
| RHD4PRSHLSTAGST1703 |  | Staging for Metal Works (Stairs - Manhole Covers) Zone 4 - SHL-STAG | 6d | 2026-02-07 | 2026-02-12 | RHD4PRSHLDOSST1703 |
| RHD4PRSHLSTAGST1103 |  | Staging for UPVC pipes Zone 4 - SHL-STAG | 6d | 2026-02-08 | 2026-02-13 | RHD4PRSHLDOSST1103 |
| RHD4PRSHLSTAGST1003 |  | Staging for GRP pipes Zone 4 - SHL-STAG | 6d | 2026-07-12 | 2026-07-17 | RHD4PRSHLDOSST1603, RHD4PRSHLPOST1000, RHD4PRSHLDOSST1003 |
|  | 5 | **RHD4-02-002-SHL-Staging Time - STAG -Storm Network - ST - Zone 5** |  | 2026-01-11 | 2026-03-25 |  |
| RHD4PRSHLSTAGST1104 |  | Staging for UPVC pipes Zone 5 - SHL-STAG | 6d | 2026-01-11 | 2026-01-16 | RHD4PRSHLDOSST1104 |
| RHD4PRSHLSTAGST1604 |  | Staging for Precast Concrete Zone 5 - SHL-STAG | 7d | 2026-02-02 | 2026-02-08 | RHD4PRSHLDOSST1604 |
| RHD4PRSHLSTAGST1704 |  | Staging for Metal Works (Stairs - Manhole Covers) Zone 5 - SHL-STAG | 6d | 2026-02-07 | 2026-02-12 | RHD4PRSHLDOSST1704 |
| RHD4PRSHLSTAGST1504 |  | Staging for Tensile reinforcement steel Zone 5 - SHL-STAG | 6d | 2026-02-13 | 2026-02-18 | RHD4PRSHLDOSST1504 |
| RHD4PRSHLSTAGST1004 |  | Staging for GRP pipes Zone 5 - SHL-STAG | 6d | 2026-03-14 | 2026-03-19 | RHD4PRSHLDOSST1604, RHD4PRSHLPOST1000, RHD4PRSHLDOSST1004 |
| RHD4PRSHLSTAGST1204 |  | Staging for HDPE pipes Zone 5 - SHL-STAG | 6d | 2026-03-20 | 2026-03-25 | RHD4PRSHLDOSST1204, RHD4PRSHLSTAGST1504 |
| RHD4PRSHLSTAGST1304 |  | Staging for Catch basin Zone 5 - SHL-STAG | 6d | 2026-03-20 | 2026-03-25 | RHD4PRSHLDOSST1304 |
|  | 6 | **RHD4-02-002-SHL-Staging Time - STAG -Storm Network - ST - Zone 6** |  | 2026-01-11 | 2026-02-17 |  |
| RHD4PRSHLSTAGST1105 |  | Staging for UPVC pipes Zone 6 - SHL-STAG | 6d | 2026-01-11 | 2026-01-16 | RHD4PRSHLDOSST1105 |
| RHD4PRSHLSTAGST1305 |  | Staging for Catch basin Zone 6 - SHL-STAG | 6d | 2026-01-26 | 2026-01-31 | RHD4PRSHLDOSST1305 |
| RHD4PRSHLSTAGST1605 |  | Staging for Precast Concrete Zone 6 - SHL-STAG | 6d | 2026-02-02 | 2026-02-07 | RHD4PRSHLDOSST1605 |
| RHD4PRSHLSTAGST1705 |  | Staging for Metal Works (Stairs - Manhole Covers) Zone 6 - SHL-STAG | 6d | 2026-02-07 | 2026-02-12 | RHD4PRSHLDOSST1705 |
| RHD4PRSHLSTAGST1005 |  | Staging for GRP pipes Zone 6 - SHL-STAG | 6d | 2026-02-12 | 2026-02-17 | RHD4PRSHLDOSST1605, RHD4PRSHLPOST1000, RHD4PRSHLDOSST1005 |
|  | 8 | **RHD4-02-002-SHL-Staging Time - STAG -Storm Network - ST - Zone 7** |  | 2026-02-02 | 2026-04-24 |  |
| RHD4PRSHLSTAGST1606 |  | Staging for Precast Concrete Zone 7 - SHL-STAG | 6d | 2026-02-02 | 2026-02-07 | RHD4PRSHLDOSST1606 |
| RHD4PRSHLSTAGST1106 |  | Staging for UPVC pipes Zone 7 - SHL-STAG | 6d | 2026-02-08 | 2026-02-13 | RHD4PRSHLDOSST1106 |
| RHD4PRSHLSTAGST1306 |  | Staging for Catch basin Zone 7 - SHL-STAG | 6d | 2026-02-08 | 2026-02-13 | RHD4PRSHLDOSST1206 |
| RHD4PRSHLSTAGST1706 |  | Staging for Metal Works (Stairs - Manhole Covers) Zone 7 - SHL-STAG | 6d | 2026-02-13 | 2026-02-18 | RHD4PRSHLDOSST1706 |
| RHD4PRSHLSTAGST1006 |  | Staging for GRP pipes Zone 7 - SHL-STAG | 6d | 2026-04-13 | 2026-04-18 | RHD4PRSHLDOSST1606, RHD4PRSHLPOST1000, RHD4PRSHLDOSST1006, RHD4PRSHLDOSST1605, RHD4PRSHLDOSST1005 |
| RHD4PRSHLSTAGST1206 |  | Staging for HDPE pipes Zone 7 - SHL-STAG | 6d | 2026-04-19 | 2026-04-24 | RHD4PRSHLDOSST1306, RHD4PRSHLSTAGST1204, RHD4PRSHLSTAPTCr1300 |
|  | 7 | **RHD4-02-002-SHL-Staging Time - STAG -Storm Network - ST - Zone 8** |  | 2026-02-02 | 2026-05-24 |  |
| RHD4PRSHLSTAGST1607 |  | Staging for Precast Concrete Zone 8 - SHL-STAG | 6d | 2026-02-02 | 2026-02-07 | RHD4PRSHLDOSST1607 |
| RHD4PRSHLSTAGST1107 |  | Staging for UPVC pipes Zone 8 - SHL-STAG | 6d | 2026-02-08 | 2026-02-13 | RHD4PRSHLDOSST1107 |
| RHD4PRSHLSTAGST1707 |  | Staging for Metal Works (Stairs - Manhole Covers) Zone 8 - SHL-STAG | 6d | 2026-02-13 | 2026-02-18 | RHD4PRSHLDOSST1707 |
| RHD4PRSHLSTAGST1007 |  | Staging for GRP pipes Zone 8 - SHL-STAG | 6d | 2026-05-13 | 2026-05-18 | RHD4PRSHLDOSST1607, RHD4PRSHLPOST1000, RHD4PRSHLDOSST1007, RHD4PRSHLSTAGST1006 |
| RHD4PRSHLSTAGST1307 |  | Staging for Catch basin Zone 8 - SHL-STAG | 6d | 2026-05-19 | 2026-05-24 | RHD4PRSHLDOSST1307 |
|  | 9 | **RHD4-02-002-SHL-Staging Time - STAG -Storm Network - ST - Zone 9** |  | 2026-02-07 | 2026-09-03 |  |
| RHD4PRSHLSTAGST1708 |  | Staging for Metal Works (Stairs - Manhole Covers) Zone 9 - SHL-STAG | 6d | 2026-02-07 | 2026-02-12 | RHD4PRSHLDOSST1708 |
| RHD4PRSHLSTAGST1608 |  | Staging for Precast Concrete Zone 9 - SHL-STAG | 6d | 2026-02-08 | 2026-02-13 | RHD4PRSHLDOSST1608 |
| RHD4PRSHLSTAGST1108 |  | Staging for UPVC pipes Zone 9 - SHL-STAG | 6d | 2026-02-14 | 2026-02-19 | RHD4PRSHLDOSST1108 |
| RHD4PRSHLSTAGST1008 |  | Staging for GRP pipes Zone 9 - SHL-STAG | 6d | 2026-06-12 | 2026-06-17 | RHD4PRSHLDOSST1608, RHD4PRSHLPOST1000, RHD4PRSHLDOSST1008, RHD4PRSHLDOSST1604, RHD4PRSHLDOSST1004 |
| RHD4PRSHLSTAGST1308 |  | Staging for Catch basin Zone 9 - SHL-STAG | 6d | 2026-08-29 | 2026-09-03 | RHD4PRSHLDOSST1308 |
|  | 115 | **RHD4-02-002-SHL-Staging Time - STAG -Sewage Network - SW** |  | 2026-01-20 | 2026-05-24 |  |
|  | 1 | **RHD4-02-002-SHL-Staging Time - STAG -Sewage Network - SW - Zone 1** |  | 2026-02-02 | 2026-03-02 |  |
| RHD4PRSHLSTAGSW1300 |  | Staging for Precast Concrete Zone 1 - SHL-DOS | 6d | 2026-02-02 | 2026-02-07 | RHD4PRSHLDOSSW1300 |
| RHD4PRSHLSTAGSW1000 |  | Staging for UPVC pipes Zone 1 - SHL-DOS | 6d | 2026-02-19 | 2026-02-24 | RHD4PRSHLDOSSW1000 |
| RHD4PRSHLSTAGSW1400 |  | Staging for Metal Works (Stairs - Manhole Covers) Zone 1 - SHL-DOS | 6d | 2026-02-25 | 2026-03-02 | RHD4PRSHLDOSSW1400 |
|  | 2 | **RHD4-02-002-SHL-Staging Time - STAG -Sewage Network - SW - Zone 2** |  | 2026-02-02 | 2026-02-19 |  |
| RHD4PRSHLSTAGSW1301 |  | Staging for Precast Concrete Zone 2 - SHL-DOS | 6d | 2026-02-02 | 2026-02-07 | RHD4PRSHLDOSSW1301 |
| RHD4PRSHLSTAGSW1401 |  | Staging for Metal Works (Stairs - Manhole Covers) Zone 2 - SHL-DOS | 6d | 2026-02-05 | 2026-02-10 | RHD4PRSHLDOSSW1401 |
| RHD4PRSHLSTAGSW1101 |  | Staging for GRP pipes Zone 2 - SHL-DOS | 6d | 2026-02-08 | 2026-02-13 | RHD4PRSHLDOSSW1101, RHD4PRSHLSTAGSW1202 |
| RHD4PRSHLSTAGSW1001 |  | Staging for UPVC pipes Zone 2 - SHL-DOS | 6d | 2026-02-14 | 2026-02-19 | RHD4PRSHLDOSSW1001 |
|  | 3 | **RHD4-02-002-SHL-Staging Time - STAG -Sewage Network - SW - Zone 3** |  | 2026-01-20 | 2026-02-21 |  |
| RHD4PRSHLSTAGSW1102 |  | Staging for GRP pipes Zone 3 - SHL-DOS | 6d | 2026-01-20 | 2026-01-25 | RHD4PRSHLDOSSW1102 |
| RHD4PRSHLSTAGSW1202 |  | Staging for Valves Zone 3 - SHL-DOS | 6d | 2026-02-02 | 2026-02-07 | RHD4PRSHLDOSSW1202, RHD4PRSHLSTAGSW1102, RHD4PRSHLSTAGSW1206 |
| RHD4PRSHLSTAGSW1502 |  | Staging for HDPE pipes Zone 3 - SHL-DOS | 6d | 2026-02-10 | 2026-02-15 | RHD4PRSHLDOSSW1502 |
| RHD4PRSHLSTAGSW1302 |  | Staging for Precast Concrete Zone 3 - SHL-DOS | 6d | 2026-02-16 | 2026-02-21 | RHD4PRSHLDOSSW1302, RHD4PRSHLSTAGSW1506 |
| RHD4PRSHLSTAGSW1402 |  | Staging for Metal Works (Stairs - Manhole Covers) Zone 3 - SHL-DOS | 6d | 2026-02-16 | 2026-02-21 | RHD4PRSHLDOSSW1402, RHD4PRSHLSTAGSW1502 |
|  | 4 | **RHD4-02-002-SHL-Staging Time - STAG -Sewage Network - SW - Zone 4** |  | 2026-01-27 | 2026-02-27 |  |
| RHD4PRSHLSTAGSW1203 |  | Staging for Valves Zone 4 - SHL-DOS | 6d | 2026-01-27 | 2026-02-01 | RHD4PRSHLDOSSW1203 |
| RHD4PRSHLSTAGSW1003 |  | Staging for UPVC pipes Zone 4 - SHL-DOS | 6d | 2026-01-28 | 2026-02-02 | RHD4PRSHLDOSSW1003 |
| RHD4PRSHLSTAGSW1403 |  | Staging for Metal Works (Stairs - Manhole Covers) Zone 4 - SHL-DOS | 6d | 2026-02-05 | 2026-02-10 | RHD4PRSHLDOSSW1403, RHD4PRSHLSTAGSW1203 |
| RHD4PRSHLSTAGSW1303 |  | Staging for Precast Concrete Zone 4 - SHL-DOS | 6d | 2026-02-11 | 2026-02-16 | RHD4PRSHLDOSSW1303, RHD4PRSHLSTAGSW1403 |
| RHD4PRSHLSTAGSW1103 |  | Staging for GRP pipes Zone 4 - SHL-DOS | 6d | 2026-02-22 | 2026-02-27 | RHD4PRSHLSTAGSW1303, RHD4PRSHLSTAGSW1402, RHD4PRSHLDOSSW1303, RHD4PRSHLPOSW1100, RHD4PRSHLDOSSW1103 |

| ID | WBS | Task | Duration | Start | Finish | Predecessors |
| --- | --- | --- | --- | --- | --- | --- |
|  | 7 | **RHD4-02-002-SHL-Staging Time - STAG -Sewage Network - SW - Zone 5** |  | 2026-02-05 | 2026-04-30 |  |
| RHD4PRSHLSTAGSW1404 |  | Staging for Metal Works (Stairs - Manhole Covers) Zone 5 - SHL-DOS | 6d | 2026-02-05 | 2026-02-10 | RHD4PRSHLDOSSW1404 |
| RHD4PRSHLSTAGSW1104 |  | Staging for GRP pipes Zone 5 - SHL-DOS | 6d | 2026-02-08 | 2026-02-13 | RHD4PRSHLDOSSW1304, RHD4PRSHLPOSW1100, RHD4PRSHLDOSSW1104 |
| RHD4PRSHLSTAGSW1004 |  | Staging for UPVC pipes Zone 5 - SHL-DOS | 6d | 2026-02-21 | 2026-02-26 | RHD4PRSHLPOSW1000, RHD4PRSHLDOSSW1004, RHD4PRSHLDOSSW1304, RHD4PRSHLPOSW1100, RHD4PRSHLDOSSW1104 |
| RHD4PRSHLSTAGSW1204 |  | Staging for Valves Zone 5 - SHL-DOS | 6d | 2026-02-27 | 2026-03-04 | RHD4PRSHLDOSSW1204 |
| RHD4PRSHLSTAGSW1504 |  | Staging for HDPE pipes Zone 5 - SHL-DOS | 6d | 2026-03-05 | 2026-03-10 | RHD4PRSHLDOSSW1504, RHD4PRSHLSTAGSW1204 |
| RHD4PRSHLSTAGSW1304 |  | Staging for Precast Concrete Zone 5 - SHL-DOS | 6d | 2026-04-25 | 2026-04-30 | RHD4PRSHLDOSSW1304, RHD4PRSHLSTAGSW1504, RHD4PRSHLSTAGSW1103, RHD4PRSHLSTAGSW1108, RHD4PRSHLSTAGSW1407, RHD4PRSHLSTAGST1206, RHD4PRSHLSTAGLV1500, RHD4GNPERMITAT2000 |
|  | 5 | **RHD4-02-002-SHL-Staging Time - STAG -Sewage Network - SW - Zone 6** |  | 2026-02-02 | 2026-03-04 |  |
| RHD4PRSHLSTAGSW1305 |  | Staging for Precast Concrete Zone 6 - SHL-DOS | 6d | 2026-02-02 | 2026-02-07 | RHD4PRSHLDOSSW1305 |
| RHD4PRSHLSTAGSW1005 |  | Staging for UPVC pipes Zone 6 - SHL-DOS | 6d | 2026-02-21 | 2026-02-26 | RHD4PRSHLDOSSW1305, RHD4PRSHLPOSW1000, RHD4PRSHLDOSSW1005, RHD4PRSHLDOSSW1004, RHD4PRSHLDOSSW1304, RHD4PRSHLPOSW1100, RHD4PRSHLDOSSW1104 |
| RHD4PRSHLSTAGSW1405 |  | Staging for Metal Works (Stairs - Manhole Covers) Zone 6 - SHL-DOS | 6d | 2026-02-27 | 2026-03-04 | RHD4PRSHLDOSSW1405 |
|  | 8 | **RHD4-02-002-SHL-Staging Time - STAG -Sewage Network - SW - Zone 7** |  | 2026-01-27 | 2026-05-24 |  |
| RHD4PRSHLSTAGSW1206 |  | Staging for Valves Zone 7 - SHL-DOS | 6d | 2026-01-27 | 2026-02-01 | RHD4PRSHLDOSSW1206 |
| RHD4PRSHLSTAGSW1306 |  | Staging for Precast Concrete Zone 7 - SHL-DOS | 6d | 2026-02-08 | 2026-02-13 | RHD4PRSHLDOSSW1306 |
| RHD4PRSHLSTAGSW1506 |  | Staging for HDPE pipes Zone 7 - SHL-DOS | 6d | 2026-02-10 | 2026-02-15 | RHD4PRSHLDOSSW1506 |
| RHD4PRSHLSTAGSW1406 |  | Staging for Metal Works (Stairs - Manhole Covers) Zone 7 - SHL-DOS | 6d | 2026-02-11 | 2026-02-16 | RHD4PRSHLDOSSW1406 |
| RHD4PRSHLSTAGSW1006 |  | Staging for UPVC pipes Zone 7 - SHL-DOS | 6d | 2026-05-19 | 2026-05-24 | RHD4PRSHLPOSW1000, RHD4PRSHLDOSSW1006, RHD4PRSHLDOSSW1306, RHD4PRSHLPOSW1100, RHD4PRSHLDOSSW1106, RHD4PRSHLDOSSW1004, RHD4PRSHLDOSSW1304, RHD4PRSHLDOSSW1104 |
| RHD4PRSHLSTAGSW1106 |  | Staging for GRP pipes Zone 7 - SHL-DOS | 6d | 2026-05-19 | 2026-05-24 | RHD4PRSHLDOSSW1306, RHD4PRSHLPOSW1100, RHD4PRSHLDOSSW1106 |
|  | 6 | **RHD4-02-002-SHL-Staging Time - STAG -Sewage Network - SW - Zone 8** |  | 2026-01-29 | 2026-03-04 |  |
| RHD4PRSHLSTAGSW1107 |  | Staging for GRP pipes Zone 8 - SHL-DOS | 6d | 2026-01-29 | 2026-02-03 | RHD4PRSHLDOSSW1107 |
| RHD4PRSHLSTAGSW1307 |  | Staging for Precast Concrete Zone 8 - SHL-DOS | 6d | 2026-02-04 | 2026-02-09 | RHD4PRSHLDOSSW1307, RHD4PRSHLSTAGSW1107 |
| RHD4PRSHLSTAGSW1407 |  | Staging for Metal Works (Stairs - Manhole Covers) Zone 8 - SHL-DOS | 6d | 2026-02-05 | 2026-02-10 | RHD4PRSHLDOSSW1407 |
| RHD4PRSHLSTAGSW1007 |  | Staging for UPVC pipes Zone 8 - SHL-DOS | 6d | 2026-02-27 | 2026-03-04 | RHD4PRSHLDOSSW1007 |
|  | 9 | **RHD4-02-002-SHL-Staging Time - STAG -Sewage Network - SW - Zone 9** |  | 2026-02-02 | 2026-03-06 |  |
| RHD4PRSHLSTAGSW1308 |  | Staging for Precast Concrete Zone 9 - SHL-DOS | 6d | 2026-02-02 | 2026-02-07 | RHD4PRSHLDOSSW1308 |
| RHD4PRSHLSTAGSW1408 |  | Staging for Metal Works (Stairs - Manhole Covers) Zone 9 - SHL-DOS | 6d | 2026-02-05 | 2026-02-10 | RHD4PRSHLDOSSW1408 |
| RHD4PRSHLSTAGSW1108 |  | Staging for GRP pipes Zone 9 - SHL-DOS | 6d | 2026-02-23 | 2026-02-28 | RHD4PRSHLSTAGSW1101, RHD4PRSHLSTAGSW1302, RHD4PRSHLSTAGSW1307, RHD4PRSHLDOSSW1308, RHD4PRSHLPOSW1100, RHD4PRSHLDOSSW1108 |
| RHD4PRSHLSTAGSW1008 |  | Staging for UPVC pipes Zone 9 - SHL-DOS | 6d | 2026-03-01 | 2026-03-06 | RHD4PRSHLDOSSW1008 |
|  | 116 | **RHD4-02-002-SHL-Staging Time - STAG -Potable Water Network - PT** |  | 2026-01-29 | 2026-06-11 |  |
|  | 1 | **RHD4-02-002-SHL-Staging Time - STAG -Potable Water Network - PT - Crossings** |  | 2026-01-29 | 2026-02-22 |  |
| RHD4PRSHLSTAPTCr1000 |  | Staging for HDPE pipes - PTCr - SHL-STAG | 6d | 2026-01-29 | 2026-02-03 | RHD4PRSHLDOSPTCr1000 |
| RHD4PRSHLSTAPTCr1200 |  | Staging for Valves - PTCr - SHL-STAG | 6d | 2026-02-05 | 2026-02-10 | RHD4PRSHLDOSPTCr1200 |
| RHD4PRSHLSTAPTCr1100 |  | Staging for Precast Concrete - PTCr - SHL-STAG | 6d | 2026-02-11 | 2026-02-16 | RHD4PRSHLDOSPTCr1100, RHD4PRSHLSTAPTCr1200 |
| RHD4PRSHLSTAPTCr1500 |  | Staging for Fire Hydrants - PTCr - SHL-STAG | 6d | 2026-02-11 | 2026-02-16 | RHD4PRSHLDOSPTCr1500 |
| RHD4PRSHLSTAPTCr1300 |  | Staging for Stem and Surface box - PTCr - SHL-STAG | 6d | 2026-02-17 | 2026-02-22 | RHD4PRSHLDOSPTCr1300, RHD4PRSHLSTAPTCr1500 |
| RHD4PRSHLSTAPTCr1400 |  | Staging for Metal Works (Chamber's Covers) - PTCr - SHL-STAG | 6d | 2026-02-17 | 2026-02-22 | RHD4PRSHLDOSPTCr1400, RHD4PRSHLSTAPTCr1100 |
|  | 2 | **RHD4-02-002-SHL-Staging Time - STAG -Potable Water Network - PT - Network** |  | 2026-02-05 | 2026-06-11 |  |
| RHD4PRSHLSTAGPT1200 |  | Staging for Valves - PT - SHL-STAG | 6d | 2026-02-05 | 2026-02-10 | RHD4PRSHLDOSPT1200 |
| RHD4PRSHLSTAGPT1400 |  | Staging for Metal Works (Chamber's Covers) - PT - SHL-STAG | 6d | 2026-02-11 | 2026-02-16 | RHD4PRSHLDOSPT1400 |
| RHD4PRSHLSTAGPT1500 |  | Staging for Fire Hydrants - PT - SHL-STAG | 6d | 2026-02-11 | 2026-02-16 | RHD4PRSHLDOSPT1500 |
| RHD4PRSHLSTAGPT1000 |  | Staging for HDPE pipes - PT - SHL-STAG | 6d | 2026-05-25 | 2026-05-30 | RHD4PRSHLDOSPT1000 |
| RHD4PRSHLSTAGPT1100 |  | Staging for Precast Concrete - PT - SHL-STAG | 6d | 2026-05-31 | 2026-06-05 | RHD4PRSHLDOSPT1100 |
| RHD4PRSHLSTAGPT1300 |  | Staging for Stem and Surface box - PT - SHL-STAG | 6d | 2026-06-06 | 2026-06-11 | RHD4PRSHLDOSPT1300 |
|  | 117 | **RHD4-02-002-SHL-Staging Time - STAG -Irrigation Network - IRR** |  | 2026-01-31 | 2026-06-17 |  |
|  | 1 | **RHD4-02-002-SHL-Staging Time - STAG -Irrigation Network - IRR - Crossings** |  | 2026-01-31 | 2026-03-03 |  |
| RHD4PRSHLSTAIRRC1000 |  | Staging for HDPE pipes - IRRC - SHL-STAG | 6d | 2026-01-31 | 2026-02-05 | RHD4PRSHLDOSIRRC1000 |
| RHD4PRSHLSTAIRRC1100 |  | Staging for Valves - IRRC - SHL-STAG | 6d | 2026-02-08 | 2026-02-13 | RHD4PRSHLDOSIRRC1100 |
| RHD4PRSHLSTAIRRC1200 |  | Staging for Precast Concrete - IRRC - SHL-STAG | 6d | 2026-02-14 | 2026-02-19 | RHD4PRSHLDOSIRRC1200, RHD4PRSHLSTAIRRC1100, RHD4PRSHLSTAIRRC1100 FF |
| RHD4PRSHLSTAIRRC1300 |  | Staging for Stem and Surface box - IRRC - SHL-STAG | 6d | 2026-02-20 | 2026-02-25 | RHD4PRSHLDOSIRRC1300, RHD4PRSHLSTAIRRC1200, RHD4PRSHLSTAIRRC1200 FF |
| RHD4PRSHLSTAIRRC1400 |  | Staging for Metal Works (Chamber's Covers) - IRRC - SHL-STAG | 6d | 2026-02-26 | 2026-03-03 | RHD4PRSHLDOSIRRC1400, RHD4PRSHLSTAIRRC1300, RHD4PRSHLSTAIRRC1300 FF |
|  | 2 | **RHD4-02-002-SHL-Staging Time - STAG -Irrigation Network - IRR - Network** |  | 2026-01-31 | 2026-06-17 |  |
| RHD4PRSHLSTAGIRR1000 |  | Staging for HDPE pipes - IRR - SHL-STAG | 6d | 2026-01-31 | 2026-02-05 | RHD4PRSHLDOSIRR1000 |
| RHD4PRSHLSTAGIRR1200 |  | Staging for Precast Concrete - IRR - SHL-STAG | 6d | 2026-02-06 | 2026-02-11 | RHD4PRSHLDOSIRR1200 |
| RHD4PRSHLSTAGIRR1100 |  | Staging for Valves - IRR - SHL-STAG | 6d | 2026-02-08 | 2026-02-13 | RHD4PRSHLDOSIRR1100 |
| RHD4PRSHLSTAGIRR1300 |  | Staging for Stem and Surface box - IRR - SHL-STAG | 6d | 2026-06-12 | 2026-06-17 | RHD4PRSHLDOSIRR1300 |
| RHD4PRSHLSTAGIRR1400 |  | Staging for Metal Works (Chamber's Covers) - IRR - SHL-STAG | 6d | 2026-06-12 | 2026-06-17 | RHD4PRSHLDOSIRR1400 |
|  | 118 | **RHD4-02-002-SHL-Staging Time - STAG -Medium Voltage - MV** |  | 2026-01-26 | 2026-02-01 |  |
| RHD4PRSHLSTAGMV1000 |  | Staging for UPVC Pipes for Duct Banks - SHL-STAG | 6d | 2026-01-26 | 2026-01-31 | RHD4PRSHLDOSMV1000 |
| RHD4PRSHLSTAGMV1100 |  | Staging for Medium Voltage Cable 3Cx500 mm2 - SHL-STAG | 6d | 2026-01-27 | 2026-02-01 | RHD4PRSHLDOSMV1100 |
| RHD4PRSHLSTAGMV1200 |  | Staging for Medium Voltage Cable 3Cx50 mm2 - SHL-STAG | 6d | 2026-01-27 | 2026-02-01 | RHD4PRSHLDOSMV1200 |
| RHD4PRSHLSTAGMV1300 |  | Staging for Straight Joints 3Cx50 mm2 - SHL-STAG | 6d | 2026-01-27 | 2026-02-01 | RHD4PRSHLDOSMV1300 |
| RHD4PRSHLSTAGMV1400 |  | Staging for Normally Open Points (Outdoor type) - SHL-STAG | 6d | 2026-01-27 | 2026-02-01 | RHD4PRSHLDOSMV1400 |
|  | 119 | **RHD4-02-002-SHL-Staging Time - STAG -Low Voltage - LV** |  | 2026-01-19 | 2026-06-23 |  |
| RHD4PRSHLSTAGLV1100 |  | Staging for Low voltage Cables - SHL-STAG | 6d | 2026-01-19 | 2026-01-24 | RHD4PRSHLDOSLV1100 |
| RHD4PRSHLSTAGLV1200 |  | Staging for Distribution Pillars - SHL-STAG | 6d | 2026-01-26 | 2026-01-31 | RHD4PRSHLDOSLV1200 |
| RHD4PRSHLSTAGLV1300 |  | Staging for KWH Meter mounting Frame - SHL-STAG | 6d | 2026-01-26 | 2026-01-31 | RHD4PRSHLDOSLV1300 |
| RHD4PRSHLSTAGLV1000 |  | Staging for UPVC Pipes for Duct Banks - SHL-STAG | 6d | 2026-01-27 | 2026-02-01 | RHD4PRSHLDOSLV1000 |
| RHD4PRSHLSTAGLV1500 |  | Staging for Earthing for Pillars and Panels - SHL-STAG | 6d | 2026-02-23 | 2026-02-28 | RHD4PRSHLDOSLV1500, RHD4PRSHLSTAPTCr1400 |
| RHD4PRSHLSTAGLV1400 |  | Staging for Low Voltage Drawpit - SHL-STAG | 6d | 2026-06-18 | 2026-06-23 | RHD4PRSHLDOSLV1400 |
|  | 120 | **RHD4-02-002-SHL-Staging Time - STAG -Street Lighting Network -SL** |  | 2026-06-24 | 2026-07-23 |  |

| ID | WBS | Task | Duration | Start | Finish | Predecessors |
| --- | --- | --- | --- | --- | --- | --- |
| RHD4PRSHLSTAGSL1400 |  | Staging for Street Lighting Drawpit - SHL-STAG | 6d | 2026-06-24 | 2026-06-29 | RHD4PRSHLDOSSL1400 |
| RHD4PRSHLSTAGSL1200 |  | Staging for Lighting Poles - SHL-STAG | 6d | 2026-06-30 | 2026-07-05 | RHD4PRSHLDOSSL1200 |
| RHD4PRSHLSTAGSL1100 |  | Staging for Street Lighting Cables - SHL-STAG | 6d | 2026-07-06 | 2026-07-11 | RHD4PRSHLDOSSL1100 |
| RHD4PRSHLSTAGSL1300 |  | Staging for Street Lighting Luminaire - SHL-STAG | 6d | 2026-07-12 | 2026-07-17 | RHD4PRSHLDOSSL1300, RHD4PRSHLSTAGSL1200 |
| RHD4PRSHLSTAGSL1000 |  | Staging for UPVC Pipes for Duct Banks - SHL-STAG | 6d | 2026-07-18 | 2026-07-23 | RHD4PRSHLDOSSL1000 |
|  | 121 | **RHD4-02-002-SHL-Staging Time - STAG -Landscape Network - LS** |  | 2026-01-20 | 2026-01-25 |  |
| RHD4PRSHLSTAGLS1000 |  | Staging for Landscape Lighting (Bollard) - SHL-STAG | 6d | 2026-01-20 | 2026-01-25 | RHD4PRSHLPOSL1300 SS, RHD4GNPPMAT1100, RHD4ENMARSUBSL400 SS |
|  | 122 | **RHD4-02-002-SHL-Staging Time - STAG -Telecommunications Network - TC** |  | 2026-07-24 | 2026-08-10 |  |
| RHD4PRSHLSTAGTC1100 |  | Staging for HDPE Road Crossings Ducts - SHL-STAG | 6d | 2026-07-24 | 2026-07-29 | RHD4PRSHLDOSTC1100 |
| RHD4PRSHLSTAGTC1000 |  | Staging for HDPE Ducts - SHL-STAG | 6d | 2026-07-30 | 2026-08-04 | RHD4PRSHLDOSTC1000 |
| RHD4PRSHLSTAGTC1200 |  | Staging for Telecommunications Manhole - SHL-STAG | 6d | 2026-08-05 | 2026-08-10 | RHD4PRSHLDOSTC1200 |
|  | 123 | **RHD4-02-002-SHL-Staging Time - STAG -Information and Communication Technologies - ICT** |  | 2026-02-24 | 2026-08-22 |  |
| RHD4PRSHLSTAGICT1200 |  | Staging for Telecommunications Manhole - SHL-STAG | 6d | 2026-02-24 | 2026-03-01 | RHD4PRSHLDOSICT1200 |
| RHD4PRSHLSTAGICT1100 |  | Staging for HDPE Road Crossings Ducts - SHL-STAG | 6d | 2026-08-11 | 2026-08-16 | RHD4PRSHLDOSICT1100 |
| RHD4PRSHLSTAGICT1000 |  | Staging for HDPE Ducts - SHL-STAG | 6d | 2026-08-17 | 2026-08-22 | RHD4PRSHLDOSICT1000 |
|  | 124 | **RHD4-02-002-SHL-Staging Time - STAG -Security Network - CCTV** |  | 2026-02-11 | 2026-03-12 |  |
| RHD4PRSHLSTACCTV1000 |  | Staging for CCTV Network Poles - SHL-STAG | 6d | 2026-02-11 | 2026-02-16 | RHD4PRSHLDOSCCTV1000 |
| RHD4PRSHLSTACCTV1200 |  | Staging for CCTV Panels and Panel's Components - SHL-STAG | 6d | 2026-02-18 | 2026-02-23 | RHD4PRSHLDOSCCTV1200 |
| RHD4PRSHLSTACCTV1300 |  | Staging for CCTV Fiber Optic Cables - SHL-STAG | 6d | 2026-03-04 | 2026-03-09 | RHD4PRSHLDOSCCTV1300, RHD4PRSHLSTAIRRC1400 |
| RHD4PRSHLSTACCTV1100 |  | Staging for CCTV Network Cameras - SHL-STAG | 6d | 2026-03-07 | 2026-03-12 | RHD4PRSHLDOSCCTV1100 |
|  | 125 | **RHD4-02-002-SHL-Staging Time - STAG -Road Works - RD** |  | 2026-01-12 | 2026-03-01 |  |
| RHD4PRSHLSTAGRD1000 |  | Staging for Aggregate Base Courses - SHL-STAG | 6d | 2026-01-12 | 2026-01-17 | RHD4PRSHLDOSRD1000 |
| RHD4PRSHLSTAGRD1100 |  | Staging for Bituminous Asphalt Layers - SHL-STAG | 6d | 2026-01-19 | 2026-01-24 | RHD4PRSHLDOSRD1100 |
| RHD4PRSHLSTAGRD1200 |  | Staging for Precast Concrete Curbstone - SHL-STAG | 6d | 2026-01-26 | 2026-01-31 | RHD4PRSHLDOSRD1200 |
| RHD4PRSHLSTAGRD1600 |  | Staging for Traffic Signage - SHL-STAG | 6d | 2026-02-02 | 2026-02-07 | RHD4PRSHLDOSRD1600 |
| RHD4PRSHLSTAGRD1300 |  | Staging for Interlock Precast Concrete Unit Paving - SHL-STAG | 6d | 2026-02-10 | 2026-02-15 | RHD4PRSHLDOSRD1300 |
| RHD4PRSHLSTAGRD1400 |  | Staging for Wheel Stopper - SHL-STAG | 6d | 2026-02-17 | 2026-02-22 | RHD4PRSHLDOSRD1400 |
| RHD4PRSHLSTAGRD1500 |  | Staging for Pavement Marking - SHL-STAG | 6d | 2026-02-24 | 2026-03-01 | RHD4PRSHLDOSRD1500 |
|  | 1 | **RHD4-02-002-SHL-Staging Time - STAG -Lift Stations - LFS** |  | 2026-01-05 | 2026-02-14 |  |
| RHD4PRSHLSTAGLFS3000 |  | Staging Time for Fire Alarm System - SHL-STAG | 6d | 2026-01-05 | 2026-01-10 | RHD4PRSHLPOLFS3000, RHD4PRSHLDOSLFS3000 |
| RHD4PRSHLSTAGLFS1400 |  | Staging Time for Metal Doors and Access Doors and Frames - SHL-STAG | 6d | 2026-01-08 | 2026-01-13 | RHD4PRSHLPOLFS1400, RHD4PRSHLDOSLFS1400 |
| RHD4PRSHLSTAGLFS2800 |  | Staging Time for Wiring Devices - SHL-STAG | 6d | 2026-01-08 | 2026-01-13 | RHD4PRSHLPOLFS2800, RHD4PRSHLDOSLFS2800 |
| RHD4PRSHLSTAGLFS2900 |  | Staging Time for Enclosed Switches and Circuit Breakers - SHL-STAG | 6d | 2026-01-08 | 2026-01-13 | RHD4PRSHLPOLFS2900, RHD4PRSHLDOSLFS2900 |
| RHD4PRSHLSTAGLFS1700 |  | Staging Time for Ductile Iron Pipes & Fittings - SHL-STAG | 6d | 2026-01-12 | 2026-01-17 | RHD4PRSHLPOLFS1700, RHD4PRSHLDOSLFS1700 |
| RHD4PRSHLSTAGLFS2100 |  | Staging Time for UPVC Pipes for Sanitary Drain - SHL-STAG | 6d | 2026-01-12 | 2026-01-17 | RHD4PRSHLPOLFS2100, RHD4PRSHLDOSLFS2100 |
| RHD4PRSHLSTAGLFS1100 |  | Staging Time for Roof Waterproofing System - SHL-STAG | 6d | 2026-01-13 | 2026-01-18 | RHD4PRSHLPOLFS1100, RHD4PRSHLDOSLFS1100 |
| RHD4PRSHLSTAGLFS2500 |  | Staging Time for Earthing for Lift Stations - SHL-STAG | 6d | 2026-01-15 | 2026-01-20 | RHD4PRSHLPOLFS2500, RHD4PRSHLDOSLFS2500 |
| RHD4PRSHLSTAGLFS1500 |  | Staging Time for Painting - SHL-STAG | 6d | 2026-01-17 | 2026-01-22 | RHD4PRSHLPOLFS1500, RHD4PRSHLDOSLFS1500 |
| RHD4PRSHLSTAGLFS1800 |  | Staging Time for Sewage Lift Station Valves - SHL-STAG | 6d | 2026-01-19 | 2026-01-24 | RHD4PRSHLPOLFS1800, RHD4PRSHLDOSLFS1800 |
| RHD4PRSHLSTAGLFS1200 |  | Staging Time for Bituminous Sheet Waterproofing - SHL-STAG | 6d | 2026-01-21 | 2026-01-26 | RHD4PRSHLPOLFS1200, RHD4PRSHLDOSLFS1200 |
| RHD4PRSHLSTAGLFS2300 |  | Staging Time for Motor Control Center (MCC) - SHL-STAG | 6d | 2026-01-24 | 2026-01-29 | RHD4PRSHLPOLFS2300, RHD4PRSHLDOSLFS2300 |
| RHD4PRSHLSTAGLFS3100 |  | Staging Time for Fences and Gates - SHL-STAG | 6d | 2026-01-24 | 2026-01-29 | RHD4PRSHLDOSLFS3100 |
| RHD4PRSHLSTAGLFS2600 |  | Staging Time for Low Voltage Cables - SHL-STAG | 6d | 2026-01-26 | 2026-01-31 | RHD4PRSHLPOLFS2600, RHD4PRSHLDOSLFS2600 |
| RHD4PRSHLSTAGLFS2400 |  | Staging Time for lighting and power panel boards - SHL-STAG | 6d | 2026-01-28 | 2026-02-02 | RHD4PRSHLPOLFS2400, RHD4PRSHLDOSLFS2400 |
| RHD4PRSHLSTAGLFS1600 |  | Staging Time for Epoxy Coating - SHL-STAG | 6d | 2026-01-31 | 2026-02-05 | RHD4PRSHLPOLFS1600, RHD4PRSHLDOSLFS1600 |
| RHD4PRSHLSTAGLFS2200 |  | Staging Time for wall mounted Split/AC - SHL-STAG | 6d | 2026-02-01 | 2026-02-06 | RHD4PRSHLPOLFS2200, RHD4PRSHLDOSLFS2200 |
| RHD4PRSHLSTAGLFS1300 |  | Staging Time for Fluid-Applied Waterproofing - SHL-STAG | 6d | 2026-02-02 | 2026-02-07 | RHD4PRSHLPOLFS1300, RHD4PRSHLDOSLFS1300 |
| RHD4PRSHLSTAGLFS1900 |  | Staging Time for Basket screen - SHL-STAG | 6d | 2026-02-03 | 2026-02-08 | RHD4PRSHLPOLFS1900, RHD4PRSHLDOSLFS1900 |
| RHD4PRSHLSTAGLFS1000 |  | Staging Time for Metal Ladder and checkered Plate - SHL-STAG | 6d | 2026-02-08 | 2026-02-13 | RHD4PRSHLPOLFS1000, RHD4PRSHLDOSLFS1000 |
| RHD4PRSHLSTAGLFS2700 |  | Staging Time for Lighting Fixtures - SHL-STAG | 6d | 2026-02-09 | 2026-02-14 | RHD4PRSHLPOLFS2700, RHD4PRSHLDOSLFS2700 |
|  | 137 | **RHD4-02-002-Construction** |  | 2025-12-22 | 2028-04-02 |  |
|  | 138 | **Demolition - DM** |  | 2027-06-24 | 2027-10-26 |  |
|  | 139 | **RHD4-02-002-Demolition - DM** |  | 2027-06-24 | 2027-10-26 |  |
|  | 148 | **Z3** |  | 2027-06-24 | 2027-08-11 |  |
|  | 149 | **RHD4-02-002-Demolition - DM-Z3-(RD-C-1 /1)** |  |  |  |  |
|  | 150 | **RHD4-02-002-Demolition - DM-Z3-(RD-C-8 /3)** |  | 2027-06-24 | 2027-08-11 |  |
| RHD4CZ3C083DM1000 |  | Removal of curbstone for Road (RD-C-8 /3) - (B1.02 41 00.01)-Z3-C083-DM | 3d | 2027-06-24 | 2027-06-27 | RHD4CZ4A013SL5200, RHD4CZ1C081RW3000 |
| RHD4CZ3C083DM1100 |  | Removal of sidewalk for Road (RD-C-8 /3) - (B1.02 41 00.02)-Z3-C083-DM | 9d | 2027-06-28 | 2027-07-07 | RHD4CZ3C083DM1000 |
| RHD4CZ3C083DM1300 |  | Removal of existing New Jersy for Road (RD-C-8 /3) - (B1.02 41 00.04)-Z3-C083-DM | 2d | 2027-07-08 | 2027-07-10 | RHD4GNPERMITENV3000, RHD4CZ3C083DM1100 |
| RHD4CZ3C083DM1400 |  | Relocation of existing Electrical cable for Road (RD-C-8 /3) - (B1.02 41 00.09)-Z3-C083-DM | 7d | 2027-07-11 | 2027-07-18 | RHD4CZ3C083DM1300 |
| RHD4CZ3C083DM1500 |  | Relocation of existing Electrical manhole for Road (RD-C-8 /3) - (B1.02 41 00.10)-Z3-C083-DM | 3d | 2027-07-19 | 2027-07-21 | RHD4CZ3C083DM1400 |
| RHD4CZ3C083DM1600 |  | Relocation of existing Sewer manholes for Road (RD-C-8 /3) - (B1.02 41 00.11)-Z3-C083-DM | 2d | 2027-07-22 | 2027-07-24 | RHD4CZ3C083DM1500 |
| RHD4CZ3C083DM1700 |  | Relocation of existing Storm manholes for Road (RD-C-8 /3) - (B1.02 41 00.12)-Z3-C083-DM | 2d | 2027-07-25 | 2027-07-26 | RHD4CZ3C083DM1600 |
| RHD4CZ3C083DM1800 |  | Relocation of existing Waterline for Road (RD-C-8 /3) - (B1.02 41 00.13)-Z3-C083-DM | 6d | 2027-07-27 | 2027-08-02 | RHD4CZ3C083DM1700 |
| RHD4CZ3C083DM2000 |  | Relocation of existing Medium tension Pole for Road (RD-C-8 /3) - (B1.02 41 00.15)-Z3-C083-DM | 4d | 2027-08-03 | 2027-08-07 | RHD4CZ3C083DM1800 |
| RHD4CZ3C083DM1200 |  | Removal of Trees for Road (RD-C-8 /3) - (B1.02 41 00.03)-Z3-C083-DM | 4d | 2027-08-08 | 2027-08-11 | RHD4ENSDZ3APPEW100, RHD4CZ3C083DM2000 |
|  | 143 | **Z2** |  | 2027-08-12 | 2027-09-14 |  |
|  | 144 | **RHD4-02-002-Demolition - DM-Z2-(RD-C-8 /2)** |  | 2027-08-12 | 2027-09-14 |  |
| RHD4CZ2C082DM1000 |  | Removal of curbstone for Road (RD-C-8 /2) - (B1.02 41 00.01)-Z2-C082-DM | 4d | 2027-08-12 | 2027-08-16 | RHD4CZ3C083DM1000, RHD4CZ3C083DM1200 |
| RHD4CZ2C082DM1100 |  | Removal of sidewalk for Road (RD-C-8 /2) - (B1.02 41 00.02)-Z2-C082-DM | 8d | 2027-08-17 | 2027-08-25 | RHD4CZ2C082DM1000 |

| ID | WBS | Task | Duration | Start | Finish | Predecessors |
| --- | --- | --- | --- | --- | --- | --- |
| RHD4CZ2C082DM1300 |  | Removal of existing New Jersy for Road (RD-C-8 /2) - (B1.02 41 00.04)-Z2-C082-DM | 2d | 2027-08-26 | 2027-08-28 | RHD4GNPERMITENV3000, RHD4CZ2C082DM1100 |
| RHD4CZ2C082DM1500 |  | Relocation of existing Electrical manhole for Road (RD-C-8 /2) - (B1.02 41 00.10)-Z2-C082-DM | 3d | 2027-08-29 | 2027-08-31 | RHD4CZ2C082DM1300 |
| RHD4CZ2C082DM1800 |  | Relocation of existing Waterline for Road (RD-C-8 /2) - (B1.02 41 00.13)-Z2-C082-DM | 12d | 2027-09-01 | 2027-09-14 | RHD4CZ2C082DM1500, RHD4CZ3C083DM1200 FF |
|  | 140 | **Z1** |  | 2027-09-15 | 2027-10-26 |  |
|  | 141 | **RHD4-02-002-Demolition - DM-Z1-(RD-C-8 /1)** |  | 2027-09-15 | 2027-10-26 |  |
| RHD4CZ1C081DM1000 |  | Removal of curbstone for Road (RD-C-8 /1) - (B1.02 41 00.01)-Z1-C081-DM | 5d | 2027-09-15 | 2027-09-20 | RHD4CZ2C082DM1000, RHD4CZ2C082DM1800 |
| RHD4CZ1C081DM1100 |  | Removal of sidewalk for Road (RD-C-8 /1) - (B1.02 41 00.02)-Z1-C081-DM | 8d | 2027-09-21 | 2027-09-30 | RHD4CZ1C081DM1000 |
| RHD4CZ1C081DM1300 |  | Removal of existing New Jersy for Road (RD-C-8 /1) - (B1.02 41 00.04)-Z1-C081-DM | 4d | 2027-10-02 | 2027-10-05 | RHD4GNPERMITENV3000, RHD4CZ1C081DM1100 |
| RHD4CZ1C081DM1600 |  | Relocation of existing Sewer manholes for Road (RD-C-8 /1) - (B1.02 41 00.11)-Z1-C081-DM | 2d | 2027-10-06 | 2027-10-07 | RHD4CZ1C081DM1300 |
| RHD4CZ1C081DM1800 |  | Relocation of existing Waterline for Road (RD-C-8 /1) - (B1.02 41 00.13)-Z1-C081-DM | 11d | 2027-10-09 | 2027-10-20 | RHD4CZ1C081DM1600 |
| RHD4CZ1C081DM1900 |  | Relocation of existing light poles for Road (RD-C-8 /1) - (B1.02 41 00.14)-Z1-C081-DM | 2d | 2027-10-21 | 2027-10-23 | RHD4CZ1C081DM1800 |
| RHD4CZ1C081DM2000 |  | Relocation of existing Medium tension Pole for Road (RD-C-8 /1) - (B1.02 41 00.15)-Z1-C081-DM | 3d | 2027-10-24 | 2027-10-26 | RHD4CZ1C081DM1900, RHD4CZ2C082DM1800 FF |
|  | 152 | **Earthworks - EW** |  | 2025-12-22 | 2027-08-05 |  |
|  | 153 | **RHD4-02-002-Block Works-EX** |  | 2026-08-23 | 2027-05-20 |  |
|  | 175 | **RHD4-02-002-Z6-Block Wokrs - Excavation** |  | 2026-08-23 | 2026-12-15 |  |
|  | 176 | **RHD4-02-002-Block Works-EX-Z6-BLOCK-15** |  | 2026-08-23 | 2026-09-01 |  |
| RHD4CZ6B15EX1000 |  | Excavation works for Block 15 - (B1.31 23 16.01)-Z6-B15-EX | 9d | 2026-08-23 | 2026-09-01 | RHD4ENMSEW2000, RHD4ENMSEW2010, RHD4ENSDZ6APPEW100 SS, RHD4PRSHLDOSST1008, RHD4PRSHLDOSST1300 |
|  | 179 | **RHD4-02-002-Block Works-EX-Z6-BLOCK-Z6** |  | 2026-09-02 | 2026-09-12 |  |
| RHD4CZ6BZ6EX1000 |  | Excavation works for Block BZ6 - (B1.31 23 16.01)-Z6-BZ6-EX | 9d | 2026-09-02 | 2026-09-12 | RHD4CZ6B15EX1000, RHD4ENMSEW2000, RHD4ENMSEW2010, RHD4ENSDZ6APPEW100 SS, RHD4CZ7C02ST1408 |
|  | 178 | **RHD4-02-002-Block Works-EX-Z6-BLOCK-17** |  | 2026-09-13 | 2026-10-14 |  |
| RHD4CZ6B17EX1000 |  | Excavation works for Block 17 - Stage 1 - (B1.31 23 16.01)-Z6-B17-EX | 9d | 2026-09-13 | 2026-09-22 | RHD4CZ6BZ6EX1000, RHD4ENMSEW2000, RHD4ENMSEW2010, RHD4ENSDZ6APPEW100 SS |
| RHD4CZ6B17EX1001 |  | Excavation works for Block 17 - Stage 2 - (B1.31 23 16.01)-Z6-B17-EX | 9d | 2026-09-24 | 2026-10-04 | RHD4CZ6B17EX1000, RHD4ENMSEW2000, RHD4ENMSEW2010, RHD4ENSDZ6APPEW100 SS |
| RHD4CZ6B17EX1002 |  | Excavation works for Block 17 - Stage 3 - (B1.31 23 16.01)-Z6-B17-EX(Completed) | 9d | 2026-10-05 | 2026-10-14 | RHD4CZ6B17EX1001, RHD4ENMSEW2000, RHD4ENMSEW2010, RHD4ENSDZ6APPEW100 SS |
|  | 177 | **RHD4-02-002-Block Works-EX-Z6-BLOCK-16** |  | 2026-12-06 | 2026-12-15 |  |
| RHD4CZ6B16EX1000 |  | Excavation works for Block 16 - (B1.31 23 16.01)-Z6-B16-EX(Completed) | 9d | 2026-12-06 | 2026-12-15 | RHD4ENMSEW2000, RHD4CZ2L102SW2500, RHD4ENMSEW2010, RHD4ENSDZ6APPEW100 SS, RHD4CZ6B17EX1002 SS |
|  | 169 | **RHD4-02-002-Z5-Block Wokrs - Excavation** |  | 2026-12-16 | 2027-03-16 |  |
|  | 171 | **RHD4-02-002-Block Works-EX-Z5-BLOCK-11** |  | 2027-02-11 | 2027-03-06 |  |
| RHD4CZ5B11EX1000 |  | Excavation works for Block 11 - Stage 1 - (B1.31 23 16.01)-Z5-B11-EX | 12d | 2027-02-11 | 2027-02-25 | RHD4ENMSEW2000, RHD4ENMSEW2010, RHD4ENSDZ5APPEW100 SS, RHD4CZ5B12EX1003 |
| RHD4CZ5B11EX1001 |  | Excavation works for Block 11 - Stage 2 - (B1.31 23 16.01)-Z5-B11-EX | 7d | 2027-02-27 | 2027-03-06 | RHD4CZ5B11EX1000, RHD4ENMSEW2000, RHD4ENMSEW2010, RHD4ENSDZ5APPEW100 SS |
|  | 170 | **RHD4-02-002-Block Works-EX-Z5-BLOCK-10** |  | 2026-12-16 | 2027-01-05 |  |
| RHD4CZ5B10EX1000 |  | Excavation works for Block 10 - Stage 1 - (B1.31 23 16.01)-Z5-B10-EX | 9d | 2026-12-16 | 2026-12-26 | RHD4ENMSEW2000, RHD4ENMSEW2010, RHD4ENSDZ5APPEW100 SS, RHD4CZ6B16EX1000 |
| RHD4CZ5B10EX1001 |  | Excavation works for Block 10 - Stage 2 - (B1.31 23 16.01)-Z5-B10-EX | 9d | 2026-12-27 | 2027-01-05 | RHD4CZ5B10EX1000, RHD4ENMSEW2000, RHD4ENMSEW2010, RHD4ENSDZ5APPEW100 SS |
|  | 172 | **RHD4-02-002-Block Works-EX-Z5-BLOCK-12** |  | 2027-01-06 | 2027-02-10 |  |
| RHD4CZ5B12EX1000 |  | Excavation works for Block 12 - Stage 1 - (B1.31 23 16.01)-Z5-B12-EX | 10d | 2027-01-06 | 2027-01-17 | RHD4ENMSEW2000, RHD4ENMSEW2010, RHD4ENSDZ5APPEW100 SS, RHD4CZ5B10EX1001 |
| RHD4CZ5B12EX1001 |  | Excavation works for Block 12 - Stage 2 - (B1.31 23 16.01)-Z5-B12-EX | 11d | 2027-01-18 | 2027-01-30 | RHD4CZ5B12EX1000, RHD4ENMSEW2000, RHD4ENMSEW2010, RHD4ENSDZ5APPEW100 SS |
| RHD4CZ5B12EX1002 |  | Excavation works for Block 12 - Stage 3 - (B1.31 23 16.01)-Z5-B12-EX | 5d | 2027-01-31 | 2027-02-04 | RHD4CZ5B12EX1001, RHD4ENMSEW2000, RHD4ENMSEW2010, RHD4ENSDZ5APPEW100 SS |
| RHD4CZ5B12EX1003 |  | Excavation works for Block 12 - Stage 4 - (B1.31 23 16.01)-Z5-B12-EX | 5d | 2027-02-06 | 2027-02-10 | RHD4CZ5B12EX1002, RHD4ENMSEW2000, RHD4ENMSEW2010, RHD4ENSDZ5APPEW100 SS |
|  | 173 | **RHD4-02-002-Block Works-EX-Z5-BLOCK-13** |  | 2027-01-06 | 2027-01-23 |  |
| RHD4CZ5B13EX1000 |  | Excavation works for Block 13 - (B1.31 23 16.01)-Z5-B13-EX(Completed) | 15d | 2027-01-06 | 2027-01-23 | RHD4ENMSEW2000, RHD4ENMSEW2010, RHD4CZ5B12EX1000 SS, RHD4CZ5B12EX1000 FF, RHD4ENSDZ5APPEW100 SS |
|  | 174 | **RHD4-02-002-Block Works-EX-Z5-BLOCK-14** |  | 2027-01-24 | 2027-03-16 |  |
| RHD4CZ5B14EX1000 |  | Excavation works for Block 14 - Stage 1 - (B1.31 23 16.01)-Z5-B14-EX | 8d | 2027-01-24 | 2027-02-01 | RHD4ENMSEW2000, RHD4ENMSEW2010, RHD4ENSDZ5APPEW100 SS, RHD4CZ5B13EX1000 |
| RHD4CZ5B14EX1001 |  | Excavation works for Block 14 - Stage 2 - (B1.31 23 16.01)-Z5-B14-EX | 8d | 2027-02-02 | 2027-02-10 | RHD4CZ5B14EX1000, RHD4ENMSEW2000, RHD4ENMSEW2010, RHD4ENSDZ5APPEW100 SS |
| RHD4CZ5B14EX1002 |  | Excavation works for Block 14 - Stage 3 - (B1.31 23 16.01)-Z5-B14-EX | 14d | 2027-02-11 | 2027-02-28 | RHD4CZ5B14EX1001, RHD4ENMSEW2000, RHD4ENMSEW2010, RHD4ENSDZ5APPEW100 SS |
| RHD4CZ5B14EX1003 |  | Excavation works for Block 14 - Stage 4 - (B1.31 23 16.01)-Z5-B14-EX(Completed) | 11d | 2027-03-01 | 2027-03-16 | RHD4CZ5B14EX1002, RHD4ENMSEW2000, RHD4ENMSEW2010, RHD4ENSDZ5APPEW100 SS |
|  | 188 | **RHD4-02-002-Z8-Block Wokrs - Excavation** |  | 2027-02-11 | 2027-04-25 |  |
|  | 193 | **RHD4-02-002-Block Works-EX-Z8-BLOCK-29** |  | 2027-03-02 | 2027-03-15 |  |
| RHD4CZ8B29EX1000 |  | Excavation works for Block 29 - (B1.31 23 16.01)-Z8-B29-EX | 9d | 2027-03-02 | 2027-03-15 | RHD4ENSDZ8APPEW100, RHD4ENMSEW2000, RHD4ENMSEW2010, RHD4ENSDZ8APPEW100 SS, RHD4CZ8B25EX1000 |
|  | 192 | **RHD4-02-002-Block Works-EX-Z8-BLOCK-28** |  | 2027-03-16 | 2027-04-08 |  |
| RHD4CZ8B28EX1000 |  | Excavation works for Block 28 - (B1.31 23 16.01)-Z8-B28-EX | 21d | 2027-03-16 | 2027-04-08 | RHD4ENSDZ8APPEW100, RHD4ENMSEW2000, RHD4ENMSEW2010, RHD4CZ8B29EX1000 |
|  | 191 | **RHD4-02-002-Block Works-EX-Z8-BLOCK-27** |  | 2027-04-10 | 2027-04-18 |  |
| RHD4CZ8B27EX1000 |  | Excavation works for Block 27 - (B1.31 23 16.01)-Z8-B27-EX | 8d | 2027-04-10 | 2027-04-18 | RHD4ENSDZ8APPEW100, RHD4ENMSEW2000, RHD4ENMSEW2010, RHD4CZ8B28EX1000 |
|  | 190 | **RHD4-02-002-Block Works-EX-Z8-BLOCK-26** |  | 2027-04-19 | 2027-04-25 |  |
| RHD4CZ8B26EX1000 |  | Excavation works for Block 26 - (B1.31 23 16.01)-Z8-B26-EX | 6d | 2027-04-19 | 2027-04-25 | RHD4ENSDZ8APPEW100, RHD4ENMSEW2000, RHD4ENMSEW2010, RHD4CZ8B27EX1000 |
|  | 189 | **RHD4-02-002-Block Works-EX-Z8-BLOCK-25** |  | 2027-02-11 | 2027-03-01 |  |
| RHD4CZ8B25EX1000 |  | Excavation works for Block 25 - (B1.31 23 16.01)-Z8-B25-EX(Completed) | 15d | 2027-02-11 | 2027-03-01 | RHD4ENMSEW2000, RHD4ENMSEW2010, RHD4ENSDZ8APPEW100 SS, RHD4CZ5B12EX1003 |
|  | 180 | **RHD4-02-002-Z7-Block Wokrs - Excavation** |  | 2027-03-02 | 2027-04-17 |  |
|  | 181 | **RHD4-02-002-Block Works-EX-Z7-BLOCK-18** |  | 2027-03-02 | 2027-03-22 |  |
| RHD4CZ7B18EX1000 |  | Excavation works for Block 18 - (B1.31 23 16.01)-Z7-B18-EX(Completed) | 15d | 2027-03-02 | 2027-03-22 | RHD4ENMSEW2000, RHD4ENMSEW2010, RHD4ENSDZ7APPEW100 SS, RHD4CZ8B25EX1000 |
|  | 182 | **RHD4-02-002-Block Works-EX-Z7-BLOCK-19** |  | 2027-03-02 | 2027-03-22 |  |
| RHD4CZ7B19EX1000 |  | Excavation works for Block 19 - (B1.31 23 16.01)-Z7-B19-EX(Completed) | 15d | 2027-03-02 | 2027-03-22 | RHD4ENMSEW2000, RHD4ENMSEW2010, RHD4ENSDZ7APPEW100 SS, RHD4CZ7B18EX1000 SS |
|  | 183 | **RHD4-02-002-Block Works-EX-Z7-BLOCK-20** |  | 2027-03-02 | 2027-04-12 |  |
| RHD4CZ7B20EX1000 |  | Excavation works for Block 20 - Stage 1 - (B1.31 23 16.01)-Z7-B20-EX | 6d | 2027-03-02 | 2027-03-08 | RHD4ENMSEW2000, RHD4ENMSEW2010, RHD4ENSDZ7APPEW100 SS, RHD4CZ7B19EX1000 SS |
| RHD4CZ7B20EX1001 |  | Excavation works for Block 20 - stage 2 - (B1.31 23 16.01)-Z7-B20-EX | 7d | 2027-03-13 | 2027-03-20 | RHD4ENMSEW2000, RHD4ENMSEW2010, RHD4ENSDZ7APPEW100 SS, RHD4CZ7B20EX1000 |
| RHD4CZ7B20EX1002 |  | Excavation works for Block 20 - Stage 3 - (B1.31 23 16.01)-Z7-B20-EX | 7d | 2027-03-21 | 2027-03-28 | RHD4ENMSEW2000, RHD4ENMSEW2010, RHD4ENSDZ7APPEW100 SS, RHD4CZ7B20EX1001 |
| RHD4CZ7B20EX1003 |  | Excavation works for Block 20 - Stage 4 - (B1.31 23 16.01)-Z7-B20-EX | 6d | 2027-03-29 | 2027-04-04 | RHD4ENMSEW2000, RHD4ENMSEW2010, RHD4ENSDZ7APPEW100 SS, RHD4CZ7B20EX1002 |
| RHD4CZ7B20EX1004 |  | Excavation works for Block 20 - Stage 5 - (B1.31 23 16.01)-Z7-B20-EX(Completed) | 7d | 2027-04-05 | 2027-04-12 | RHD4ENMSEW2000, RHD4ENMSEW2010, RHD4ENSDZ7APPEW100 SS, RHD4CZ7B20EX1003 |
|  | 184 | **RHD4-02-002-Block Works-EX-Z7-BLOCK-21** |  | 2027-04-13 | 2027-04-17 |  |
| RHD4CZ7B21EX1000 |  | Excavation works for Block 21 - Stage 1 - (B1.31 23 16.01)-Z7-B21-EX | 2d | 2027-04-13 | 2027-04-14 | RHD4ENMSEW2000, RHD4ENMSEW2010, RHD4ENSDZ7APPEW100 SS, RHD4CZ7B20EX1003, RHD4CZ7B20EX1004 |
| RHD4CZ7B21EX1001 |  | Excavation works for Block 21 - stage 2 - (B1.31 23 16.01)-Z7-B21-EX | 2d | 2027-04-15 | 2027-04-17 | RHD4ENSDZ7APPEW100, RHD4ENMSEW2000, RHD4ENMSEW2010, RHD4CZ7B21EX1000 |
|  | 185 | **RHD4-02-002-Block Works-EX-Z7-BLOCK-22** |  | 2027-03-02 | 2027-03-23 |  |

| ID | WBS | Task | Duration | Start | Finish | Predecessors |
| --- | --- | --- | --- | --- | --- | --- |
| RHD4CZ7B22EX1000 |  | Excavation works for Block 22 - (B1.31 23 16.01)-Z7-B22-EX(Completed) | 16d | 2027-03-02 | 2027-03-23 | RHD4ENMSEW2000, RHD4ENMSEW2010, RHD4ENSDZ7APPEW100 SS, RHD4CZ8B25EX1000 |
|  | 186 | **RHD4-02-002-Block Works-EX-Z7-BLOCK-23** |  | 2027-03-13 | 2027-03-23 |  |
| RHD4CZ7B23EX1000 |  | Excavation works for Block 23 - (B1.31 23 16.01)-Z7-B23-EX | 10d | 2027-03-13 | 2027-03-23 | RHD4ENMSEW2000, RHD4ENMSEW2010, RHD4ENSDZ7APPEW100 SS, RHD4CZ7B22EX1000 SS, RHD4CZ7B20EX1000 |
|  | 187 | **RHD4-02-002-Block Works-EX-Z7-BLOCK-24** |  | 2027-03-24 | 2027-04-10 |  |
| RHD4CZ7B24EX1000 |  | Excavation works for Block 24 - (B1.31 23 16.01)-Z7-B24-EX(Completed) | 15d | 2027-03-24 | 2027-04-10 | RHD4ENMSEW2000, RHD4ENMSEW2010, RHD4ENSDZ7APPEW100 SS, RHD4CZ5B12EX1003, RHD4CZ7B23EX1000 |
|  | 158 | **RHD4-02-002-Z2-Block Wokrs - Excavation** |  | 2027-02-02 | 2027-04-13 |  |
|  | 159 | **RHD4-02-002-Block Works-EX-Z2-BLOCK-04** |  | 2027-02-02 | 2027-03-23 |  |
| RHD4CZ2B04EX1000 |  | Excavation works for Block 04 - Stage 1 - (B1.31 23 16.01)-Z2-B04-EX(Completed) | 13d | 2027-02-02 | 2027-02-16 | RHD4ENMSEW2000, RHD4ENMSEW2010, RHD4CZ5B14EX1000 |
| RHD4CZ2B04EX1001 |  | Excavation works for Block 04 - Stage 2 - (B1.31 23 16.01)-Z2-B04-EX | 13d | 2027-02-17 | 2027-03-04 | RHD4ENMSEW2000, RHD4ENMSEW2010, RHD4ENMSEW2000 FF, RHD4ENMSEW2010 FF, RHD4CZ2B04EX1000, RHD4CZ2B04EX1000 FF |
| RHD4CZ2B04EX1002 |  | Excavation works for Block 04 - Stage 3 - (B1.31 23 16.01)-Z2-B04-EX | 13d | 2027-03-06 | 2027-03-23 | RHD4ENSDZ2APPEW100, RHD4ENMSEW2000, RHD4ENMSEW2010, RHD4CZ2B04EX1001, RHD4CZ2B04EX1001 FF |
|  | 160 | **RHD4-02-002-Block Works-EX-Z2-BLOCK-05** |  | 2027-03-24 | 2027-04-13 |  |
| RHD4CZ2B05EX1000 |  | Excavation works for Block 05 - Stage 1 - (B1.31 23 16.01)-Z2-B05-EX | 9d | 2027-03-24 | 2027-04-03 | RHD4ENMSEW2000, RHD4ENMSEW2010, RHD4CZ5B14EX1000, RHD4CZ2B04EX1002 |
| RHD4CZ2B05EX1001 |  | Excavation works for Block 05 - Stage 2 - (B1.31 23 16.01)-Z2-B05-EX | 9d | 2027-04-04 | 2027-04-13 | RHD4ENSDZ2APPEW100, RHD4ENMSEW2000, RHD4ENMSEW2010, RHD4CZ2B05EX1000 |
|  | 161 | **RHD4-02-002-Z3-Block Wokrs - Excavation** |  | 2027-03-24 | 2027-04-29 |  |
|  | 162 | **RHD4-02-002-Block Works-EX-Z3-BLOCK-Z3** |  | 2027-03-24 | 2027-04-29 |  |
| RHD4CZ3BZ3EX1000 |  | Excavation works for Block BZ3 - Stage 1 - (B1.31 23 16.01)-Z3-BZ3-EX | 5d | 2027-03-24 | 2027-03-29 | RHD4ENMSEW2000, RHD4ENMSEW2010, RHD4ENSDZ3APPEW100 SS, RHD4CZ2B04EX1002 |
| RHD4CZ3BZ3EX1001 |  | Excavation works for Block BZ3 - Stage 2 - (B1.31 23 16.01)-Z3-BZ3-EX | 14d | 2027-03-30 | 2027-04-14 | RHD4ENMSEW2000, RHD4ENMSEW2010, RHD4ENSDZ3APPEW100 SS, RHD4CZ3BZ3EX1000 |
| RHD4CZ3BZ3EX1002 |  | Excavation works for Block BZ3 - Stage 3 - (B1.31 23 16.01)-Z3-BZ3-EX(Completed) | 13d | 2027-04-15 | 2027-04-29 | RHD4ENSDZ3APPEW100 FF, RHD4ENMSEW2000, RHD4ENMSEW2010, RHD4ENSDZ3APPEW100 SS, RHD4CZ3BZ3EX1001 |
|  | 194 | **RHD4-02-002-Z9-Block Wokrs - Excavation** |  | 2027-03-30 | 2027-05-09 |  |
|  | 196 | **RHD4-02-002-Block Works-EX-Z9-BLOCK-31** |  | 2027-03-30 | 2027-04-24 |  |
| RHD4CZ9B31EX1000 |  | Excavation works for Block 31 - Stage 1 - (B1.31 23 16.01)-Z9-B31-EX | 3d | 2027-03-30 | 2027-04-01 | RHD4ENMSEW2000, RHD4ENMSEW2010, RHD4ENSDZ9APPEW100 SS, RHD4CZ3BZ3EX1000 |
| RHD4CZ9B31EX1001 |  | Excavation works for Block 31 - stage 2 - (B1.31 23 16.01)-Z9-B31-EX | 3d | 2027-04-03 | 2027-04-05 | RHD4ENMSEW2000, RHD4ENMSEW2010, RHD4ENSDZ9APPEW100 SS, RHD4CZ9B31EX1000 |
| RHD4CZ9B31EX1002 |  | Excavation works for Block 31 - Stage 3 - (B1.31 23 16.01)-Z9-B31-EX(Completed) | 16d | 2027-04-06 | 2027-04-24 | RHD4ENMSEW2000, RHD4ENMSEW2010, RHD4ENSDZ9APPEW100 SS, RHD4CZ9B31EX1001 |
|  | 198 | **RHD4-02-002-Block Works-EX-Z9-BLOCK-33** |  | 2027-04-06 | 2027-04-24 |  |
| RHD4CZ9B33EX1000 |  | Excavation works for Block 33 - (B1.31 23 16.01)-Z9-B33-EX(Completed) | 16d | 2027-04-06 | 2027-04-24 | RHD4ENMSEW2000, RHD4ENMSEW2010, RHD4ENSDZ9APPEW100 SS, RHD4CZ9B31EX1002 SS |
|  | 197 | **RHD4-02-002-Block Works-EX-Z9-BLOCK-32** |  | 2027-04-06 | 2027-04-22 |  |
| RHD4CZ9B32EX1000 |  | Excavation works for Block 32 - (B1.31 23 16.01)-Z9-B32-EX(Completed) | 15d | 2027-04-06 | 2027-04-22 | RHD4ENMSEW2000, RHD4ENMSEW2010, RHD4ENSDZ9APPEW100 SS, RHD4CZ9B33EX1000 SS |
|  | 195 | **RHD4-02-002-Block Works-EX-Z9-BLOCK-30** |  | 2027-04-25 | 2027-05-04 |  |
| RHD4CZ9B30EX1000 |  | Excavation works for Block 30 - (B1.31 23 16.01)-Z9-B30-EX | 9d | 2027-04-25 | 2027-05-04 | RHD4ENMSEW2000, RHD4ENMSEW2010, RHD4ENSDZ9APPEW100 SS, RHD4CZ9B32EX1000, RHD4CZ9B33EX1000, RHD4CZ9B31EX1001, RHD4CZ9B31EX1002 |
|  | 199 | **RHD4-02-002-Block Works-EX-Z9-BLOCK-34** |  | 2027-03-30 | 2027-04-15 |  |
| RHD4CZ9B34EX1000 |  | Excavation works for Block 34 - (B1.31 23 16.01)-Z9-B34-EX(Completed) | 15d | 2027-03-30 | 2027-04-15 | RHD4ENMSEW2000, RHD4ENMSEW2010, RHD4CZ3BZ3EX1000 |
|  | 200 | **RHD4-02-002-Block Works-EX-Z9-BLOCK-35** |  | 2027-03-30 | 2027-04-15 |  |
| RHD4CZ9B35EX1000 |  | Excavation works for Block 35 - (B1.31 23 16.01)-Z9-B35-EX(Completed) | 15d | 2027-03-30 | 2027-04-15 | RHD4ENMSEW2000, RHD4ENMSEW2010, RHD4CZ9B34EX1000 SS |
|  | 201 | **RHD4-02-002-Block Works-EX-Z9-BLOCK-36** |  | 2027-05-05 | 2027-05-09 |  |
| RHD4CZ9B36EX1000 |  | Excavation works for Block 36 - (B1.31 23 16.01)-Z9-B36-EX | 4d | 2027-05-05 | 2027-05-09 | RHD4ENMSEW2000, RHD4ENMSEW2010, RHD4CZ9B35EX1000, RHD4CZ9B30EX1000, RHD4CZ9B34EX1000 |
|  | 163 | **RHD4-02-002-Z4-Block Wokrs - Excavation** |  | 2027-03-23 | 2027-05-20 |  |
|  | 167 | **RHD4-02-002-Block Works-EX-Z4-BLOCK-09** |  | 2027-04-17 | 2027-05-03 |  |
| RHD4CZ4B09EX1000 |  | Excavation works for Block 09 - (B1.31 23 16.01)-Z4-B09-EX(Completed) | 15d | 2027-04-17 | 2027-05-03 | RHD4ENMSEW2000, RHD4ENMSEW2010, RHD4ENSDZ4APPEW100 SS, RHD4CZ9B35EX1000 |
|  | 166 | **RHD4-02-002-Block Works-EX-Z4-BLOCK-08** |  | 2027-03-24 | 2027-04-27 |  |
| RHD4CZ4B08EX1000 |  | Excavation works for Block 08 - Stage 1 - (B1.31 23 16.01)-Z4-B08-EX | 15d | 2027-03-24 | 2027-04-10 | RHD4ENMSEW2000, RHD4ENMSEW2010, RHD4CZ6B17EX1001, RHD4CZ2B04EX1002 |
| RHD4CZ4B08EX1001 |  | Excavation works for Block 08 - Stage 2 - (B1.31 23 16.01)-Z4-B08-EX | 15d | 2027-04-11 | 2027-04-27 | RHD4CZ4B08EX1000, RHD4ENSDZ4APPEW100, RHD4ENMSEW2000, RHD4ENMSEW2010 |
|  | 165 | **RHD4-02-002-Block Works-EX-Z4-BLOCK-07** |  | 2027-03-30 | 2027-05-20 |  |
| RHD4CZ4B07EX1000 |  | Excavation works for Block 07 - Stage 1 - (B1.31 23 16.01)-Z4-B07-EX(Completed) | 20d | 2027-03-30 | 2027-04-21 | RHD4ENMSEW2000, RHD4ENMSEW2010, RHD4ENSDZ4APPEW100 SS, RHD4CZ9B35EX1000 SS |
| RHD4CZ4B07EX1001 |  | Excavation works for Block 07 - Stage 2 - (B1.31 23 16.01)-Z4-B07-EX | 21d | 2027-04-22 | 2027-05-20 | RHD4ENSDZ4APPEW100, RHD4ENMSEW2000, RHD4ENMSEW2010, RHD4ENSDZ4APPEW100 SS, RHD4CZ4B07EX1000 |
|  | 164 | **RHD4-02-002-Block Works-EX-Z4-BLOCK-06** |  | 2027-03-30 | 2027-04-25 |  |
| RHD4CZ4B06EX1000 |  | Excavation works for Block 06 - Stage 1 - (B1.31 23 16.01)-Z4-B06-EX(Completed) | 10d | 2027-03-30 | 2027-04-10 | RHD4ENMSEW2000, RHD4ENMSEW2010, RHD4CZ9B35EX1000 SS |
| RHD4CZ4B06EX1001 |  | Excavation works for Block 06 - Stage 2 - (B1.31 23 16.01)-Z4-B06-EX | 13d | 2027-04-11 | 2027-04-25 | RHD4ENSDZ4APPEW100, RHD4ENMSEW2000, RHD4ENMSEW2010, RHD4CZ4B06EX1000 |
|  | 168 | **RHD4-02-002-Block Works-EX-Z4-BLOCK-Z4** |  | 2027-03-23 | 2027-04-14 |  |
| RHD4CZ4BZ4EX1000 |  | Excavation works for Block BZ4 - Stage 1 - (B1.31 23 16.01)-Z4-BZ4-EX | 10d | 2027-03-23 | 2027-04-03 | RHD4ENSDZ4APPEW100, RHD4ENMSEW2000, RHD4ENMSEW2010, RHD4ENSDZ7APPEW100 SS, RHD4CZ7B18EX1000, RHD4ENSDZ8APPEW100 SS, RHD4CZ8B25EX1000 |
| RHD4CZ4BZ4EX1001 |  | Excavation works for Block BZ4 - Stage 2 - (B1.31 23 16.01)-Z4-BZ4-EX | 10d | 2027-04-04 | 2027-04-14 | RHD4CZ4BZ4EX1000, RHD4ENSDZ4APPEW100, RHD4ENMSEW2000, RHD4ENMSEW2010 |
|  | 154 | **RHD4-02-002-Z1-Block Wokrs - Excavation** |  | 2027-02-17 | 2027-04-27 |  |
|  | 155 | **RHD4-02-002-Block Works-EX-Z1-BLOCK-01** |  | 2027-02-17 | 2027-03-17 |  |
| RHD4CZ1B01EX1000 |  | Excavation works for Block 01 - (B1.31 23 16.01)-Z1-B01-EX | 21d | 2027-02-17 | 2027-03-17 | RHD4ENMSEW2000, RHD4ENMSEW2010, RHD4CZ2B04EX1000 |
|  | 156 | **RHD4-02-002-Block Works-EX-Z1-BLOCK-02** |  | 2027-03-18 | 2027-04-10 |  |
| RHD4CZ1B02EX1000 |  | Excavation works for Block 02 - (B1.31 23 16.01)-Z1-B02-EX | 20d | 2027-03-18 | 2027-04-10 | RHD4ENMSEW2000, RHD4ENMSEW2010, RHD4CZ1B01EX1000 |
|  | 157 | **RHD4-02-002-Block Works-EX-Z1-BLOCK-03** |  | 2027-04-11 | 2027-04-27 |  |
| RHD4CZ1B03EX1000 |  | Excavation works for Block 03 - (B1.31 23 16.01)-Z1-B03-EX | 15d | 2027-04-11 | 2027-04-27 | RHD4ENMSEW2000, RHD4ENMSEW2010, RHD4CZ1B02EX1000 |
|  | 202 | **RHD4-02-002-Block Works - BF** |  | 2027-03-02 | 2027-08-05 |  |
|  | 224 | **RHD4-02-002-Z6-Block Works - Backfill** |  | 2027-03-30 | 2027-05-23 |  |
|  | 225 | **RHD4-02-002-Block Works - BF-Z6-BLOCK-15** |  | 2027-03-30 | 2027-04-06 |  |
| RHD4CZ6B15BF2000 |  | Backfill Layers works Using Dynamic Compaction Crane (RIC) for Block 15 - (B1.31 23 23.03)-Z6-B15-BF | 7d | 2027-03-30 | 2027-04-06 | RHD4CZ6B15EX1000, RHD4ENMARAPPEW100, RHD4CZ3BZ3EX1000 |
|  | 226 | **RHD4-02-002-Block Works - BF-Z6-BLOCK-16** |  | 2027-04-07 | 2027-04-15 |  |
| RHD4CZ6B16BF2000 |  | Backfill Layers works Using Dynamic Compaction Crane (RIC) for Block 16 - (B1.31 23 23.03)-Z6-B16-BF | 8d | 2027-04-07 | 2027-04-15 | RHD4ENMARAPPEW100, RHD4CZ6B15BF2000 |
|  | 227 | **RHD4-02-002-Block Works - BF-Z6-BLOCK-17** |  | 2027-04-17 | 2027-04-25 |  |
| RHD4CZ6B17BF2000 |  | Backfill Layers works Using Dynamic Compaction Crane (RIC) for Block 17 - (B1.31 23 23.03)-Z6-B17-BF(Completed) | 8d | 2027-04-17 | 2027-04-25 | RHD4ENMARAPPEW100, RHD4CZ6B17EX1002 SS, RHD4CZ6B16BF2000 |
|  | 228 | **RHD4-02-002-Block Works - BF-Z6-BLOCK-Z6** |  | 2027-04-26 | 2027-05-23 |  |
| RHD4CZ6BZ6BF2000 |  | Backfill Layers works Using Dynamic Compaction Crane (RIC) for Block BZ6 - (B1.31 23 23.03)-Z6-BZ6-BF | 20d | 2027-04-26 | 2027-05-23 | RHD4CZ6BZ6EX1000, RHD4ENMARAPPEW100, RHD4CZ3BZ3EX1001, RHD4CZ6B17BF2000 |
|  | 237 | **RHD4-02-002-Z8-Block Works - Backfill** |  | 2027-04-26 | 2027-06-12 |  |
|  | 238 | **RHD4-02-002-Block Works - BF-Z8-BLOCK-25** |  | 2027-04-26 | 2027-05-03 |  |
| RHD4CZ8B25BF2000 |  | Backfill Layers works Using Dynamic Compaction Crane (RIC) for Block 25 - (B1.31 23 23.03)-Z8-B25-BF | 7d | 2027-04-26 | 2027-05-03 | RHD4ENMARAPPEW100, RHD4CZ6B17BF2000, RHD4CZ6B17EX1001, RHD4ENMSEW2000, RHD4ENMSEW2010, RHD4ENSDZ6APPEW100 SS, RHD4CZ6B17EX1002, RHD4CZ1B02EX1000, RHD4CZ1B02EX1000 FF |

| ID | WBS | Task | Duration | Start | Finish | Predecessors |
| --- | --- | --- | --- | --- | --- | --- |
|  | 239 | **RHD4-02-002-Block Works - BF-Z8-BLOCK-26** |  | 2027-05-04 | 2027-05-05 |  |
| RHD4CZ8B26BF2000 |  | Backfill Layers works Using Dynamic Compaction Crane (RIC) for Block 26 - (B1.31 23 23.03)-Z8-B26-BF | 2d | 2027-05-04 | 2027-05-05 | RHD4ENMARAPPEW100, RHD4CZ8B26EX1000, RHD4CZ8B25BF2000 |
|  | 240 | **RHD4-02-002-Block Works - BF-Z8-BLOCK-27** |  | 2027-05-06 | 2027-05-19 |  |
| RHD4CZ8B27BF2000 |  | Backfill Layers works Using Dynamic Compaction Crane (RIC) for Block 27 - (B1.31 23 23.03)-Z8-B27-BF | 8d | 2027-05-06 | 2027-05-19 | RHD4ENMARAPPEW100, RHD4CZ8B27EX1000, RHD4CZ8B26BF2000 |
|  | 241 | **RHD4-02-002-Block Works - BF-Z8-BLOCK-28** |  | 2027-05-20 | 2027-06-01 |  |
| RHD4CZ8B28BF2000 |  | Backfill Layers works Using Dynamic Compaction Crane (RIC) for Block 28 - (B1.31 23 23.03)-Z8-B28-BF | 11d | 2027-05-20 | 2027-06-01 | RHD4ENMARAPPEW100, RHD4CZ8B28EX1000, RHD4CZ8B27BF2000 |
|  | 242 | **RHD4-02-002-Block Works - BF-Z8-BLOCK-29** |  | 2027-06-02 | 2027-06-12 |  |
| RHD4CZ8B29BF2000 |  | Backfill Layers works Using Dynamic Compaction Crane (RIC) for Block 29 - (B1.31 23 23.03)-Z8-B29-BF | 9d | 2027-06-02 | 2027-06-12 | RHD4ENMARAPPEW100, RHD4CZ8B29EX1000, RHD4CZ8B28BF2000 |
|  | 243 | **RHD4-02-002-Z9-Block Works - Backfill** |  | 2027-03-31 | 2027-06-22 |  |
|  | 244 | **RHD4-02-002-Block Works - BF-Z9-BLOCK-30** |  | 2027-03-31 | 2027-04-11 |  |
| RHD4CZ9B30BF2000 |  | Backfill Layers works Using Dynamic Compaction Crane (RIC) for Block 30 - (B1.31 23 23.03)-Z9-B30-BF | 10d | 2027-03-31 | 2027-04-11 | RHD4ENMARAPPEW100, RHD4CZ5B11BF2000, RHD4CZ5B12BF2000 |
|  | 245 | **RHD4-02-002-Block Works - BF-Z9-BLOCK-31** |  | 2027-04-12 | 2027-04-13 |  |
| RHD4CZ9B31BF2000 |  | Backfill Layers works Using Dynamic Compaction Crane (RIC) for Block 31 - (B1.31 23 23.03)-Z9-B31-BF | 2d | 2027-04-12 | 2027-04-13 | RHD4ENMARAPPEW100, RHD4CZ9B30BF2000 |
|  | 246 | **RHD4-02-002-Block Works - BF-Z9-BLOCK-32** |  | 2027-04-25 | 2027-04-29 |  |
| RHD4CZ9B32BF2000 |  | Backfill Layers works Using Dynamic Compaction Crane (RIC) for Block 32 - (B1.31 23 23.03)-Z9-B32-BF | 5d | 2027-04-25 | 2027-04-29 | RHD4ENMARAPPEW100, RHD4CZ9B31BF2000, RHD4ENMSEW2000, RHD4ENMSEW2010, RHD4ENSDZ9APPEW100 SS, RHD4CZ9B32EX1000, RHD4CZ9B33EX1000, RHD4CZ9B31EX1001, RHD4CZ9B31EX1002 |
|  | 247 | **RHD4-02-002-Block Works - BF-Z9-BLOCK-33** |  | 2027-05-01 | 2027-05-22 |  |
| RHD4CZ9B33BF2000 |  | Backfill Layers works Using Dynamic Compaction Crane (RIC) for Block 33 - (B1.31 23 23.03)-Z9-B33-BF | 15d | 2027-05-01 | 2027-05-22 | RHD4ENMARAPPEW100, RHD4CZ9B31BF2000, RHD4CZ9B32BF2000 |
|  | 248 | **RHD4-02-002-Block Works - BF-Z9-BLOCK-34** |  | 2027-05-23 | 2027-06-02 |  |
| RHD4CZ9B34BF2000 |  | Backfill Layers works Using Dynamic Compaction Crane (RIC) for Block 34 - (B1.31 23 23.03)-Z9-B34-BF | 10d | 2027-05-23 | 2027-06-02 | RHD4ENMARAPPEW100, RHD4CZ9B33BF2000 |
|  | 249 | **RHD4-02-002-Block Works - BF-Z9-BLOCK-35** |  | 2027-06-03 | 2027-06-15 |  |
| RHD4CZ9B35BF2000 |  | Backfill Layers works Using Dynamic Compaction Crane (RIC) for Block 35 - (B1.31 23 23.03)-Z9-B35-BF | 11d | 2027-06-03 | 2027-06-15 | RHD4ENMARAPPEW100, RHD4CZ9B34BF2000 |
|  | 250 | **RHD4-02-002-Block Works - BF-Z9-BLOCK-36** |  | 2027-06-16 | 2027-06-22 |  |
| RHD4CZ9B36BF2000 |  | Backfill Layers works Using Dynamic Compaction Crane (RIC) for Block 36 - (B1.31 23 23.03)-Z9-B36-BF | 6d | 2027-06-16 | 2027-06-22 | RHD4ENMARAPPEW100, RHD4CZ9B35BF2000, RHD4CZ8B29BF2000 |
|  | 229 | **RHD4-02-002-Z7-Block Works - Backfill** |  | 2027-03-02 | 2027-06-16 |  |
|  | 230 | **RHD4-02-002-Block Works - BF-Z7-BLOCK-18** |  | 2027-03-02 | 2027-03-17 |  |
| RHD4CZ7B18BF2000 |  | Backfill Layers works Using Dynamic Compaction Crane (RIC) for Block 18 - (B1.31 23 23.03)-Z7-B18-BF | 11d | 2027-03-02 | 2027-03-17 | RHD4ENMARAPPEW100, RHD4CZ7B18EX1000 SS |
|  | 231 | **RHD4-02-002-Block Works - BF-Z7-BLOCK-19** |  | 2027-03-18 | 2027-04-11 |  |
| RHD4CZ7B19BF2000 |  | Backfill Layers works Using Dynamic Compaction Crane (RIC) for Block 19 - (B1.31 23 23.03)-Z7-B19-BF | 21d | 2027-03-18 | 2027-04-11 | RHD4ENMARAPPEW100, RHD4CZ7B18BF2000, RHD4CZ7B19EX1000 SS |
|  | 232 | **RHD4-02-002-Block Works - BF-Z7-BLOCK-20** |  | 2027-04-12 | 2027-05-03 |  |
| RHD4CZ7B20BF2000 |  | Backfill Layers works Using Dynamic Compaction Crane (RIC) for Block 20 - (B1.31 23 23.03)-Z7-B20-BF | 19d | 2027-04-12 | 2027-05-03 | RHD4ENMARAPPEW100, RHD4CZ7B20EX1004 SS, RHD4CZ7B19BF2000 |
|  | 233 | **RHD4-02-002-Block Works - BF-Z7-BLOCK-21** |  | 2027-05-04 | 2027-05-26 |  |
| RHD4CZ7B21BF2000 |  | Backfill Layers works Using Dynamic Compaction Crane (RIC) for Block 21 - (B1.31 23 23.03)-Z7-B21-BF(Completed) | 16d | 2027-05-04 | 2027-05-26 | RHD4ENMARAPPEW100, RHD4CZ7B20BF2000 |
|  | 234 | **RHD4-02-002-Block Works - BF-Z7-BLOCK-22** |  | 2027-05-27 | 2027-06-16 |  |
| RHD4CZ7B22BF2000 |  | Backfill Layers works Using Dynamic Compaction Crane (RIC) for Block 22 - (B1.31 23 23.03)-Z7-B22-BF | 18d | 2027-05-27 | 2027-06-16 | RHD4ENMARAPPEW100, RHD4CZ1B02BF2000, RHD4CZ7B21EX1001, RHD4CZ7B20BF2000, RHD4CZ7B21BF2000 |
|  | 235 | **RHD4-02-002-Block Works - BF-Z7-BLOCK-23** |  | 2027-06-14 | 2027-06-16 |  |
| RHD4CZ7B23BF2000 |  | Backfill Layers works Using Dynamic Compaction Crane (RIC) for Block 23 - (B1.31 23 23.03)-Z7-B23-BF | 3d | 2027-06-14 | 2027-06-16 | RHD4ENMARAPPEW100, RHD4CZ7B23EX1000, RHD4CZ7B22BF2000 FF |
|  | 236 | **RHD4-02-002-Block Works - BF-Z7-BLOCK-24** |  | 2027-04-11 | 2027-05-04 |  |
| RHD4CZ7B24BF2000 |  | Backfill Layers works Using Dynamic Compaction Crane (RIC) for Block 24 - (B1.31 23 23.03)-Z7-B24-BF | 21d | 2027-04-11 | 2027-05-04 | RHD4ENMARAPPEW100, RHD4ENMSEW2000, RHD4ENMSEW2010, RHD4ENSDZ7APPEW100 SS, RHD4CZ5B12EX1003, RHD4CZ7B23EX1000, RHD4CZ7B24EX1000 |
|  | 218 | **RHD4-02-002-Z5-Block Works - Backfill** |  | 2027-03-07 | 2027-05-08 |  |
|  | 219 | **RHD4-02-002-Block Works - BF-Z5-BLOCK-10** |  | 2027-04-07 | 2027-04-17 |  |
| RHD4CZ5B10BF2000 |  | Backfill Layers works Using Dynamic Compaction Crane (RIC) for Block 10 - (B1.31 23 23.03)-Z5-B10-BF | 9d | 2027-04-07 | 2027-04-17 | RHD4CZ5B10EX1001, RHD4ENMARAPPEW100, RHD4CZ6B15BF2000 |
|  | 220 | **RHD4-02-002-Block Works - BF-Z5-BLOCK-11** |  | 2027-03-07 | 2027-03-17 |  |
| RHD4CZ5B11BF2000 |  | Backfill Layers works Using Dynamic Compaction Crane (RIC) for Block 11 - (B1.31 23 23.03)-Z5-B11-BF | 7d | 2027-03-07 | 2027-03-17 | RHD4CZ5B11EX1001, RHD4ENMARAPPEW100 |
|  | 221 | **RHD4-02-002-Block Works - BF-Z5-BLOCK-12** |  | 2027-03-18 | 2027-03-30 |  |
| RHD4CZ5B12BF2000 |  | Backfill Layers works Using Dynamic Compaction Crane (RIC) for Block 12 - (B1.31 23 23.03)-Z5-B12-BF(Completed) | 11d | 2027-03-18 | 2027-03-30 | RHD4CZ5B11BF2000 |
|  | 222 | **RHD4-02-002-Block Works - BF-Z5-BLOCK-13** |  | 2027-04-18 | 2027-04-27 |  |
| RHD4CZ5B13BF2000 |  | Backfill Layers works Using Dynamic Compaction Crane (RIC) for Block 13 - (B1.31 23 23.03)-Z5-B13-BF | 9d | 2027-04-18 | 2027-04-27 | RHD4ENMARAPPEW100, RHD4CZ5B13EX1000 SS, RHD4CZ5B10BF2000 |
|  | 223 | **RHD4-02-002-Block Works - BF-Z5-BLOCK-14** |  | 2027-04-28 | 2027-05-08 |  |
| RHD4CZ5B14BF2000 |  | Backfill Layers works Using Dynamic Compaction Crane (RIC) for Block 14 - (B1.31 23 23.03)-Z5-B14-BF | 9d | 2027-04-28 | 2027-05-08 | RHD4ENMARAPPEW100, RHD4CZ5B14EX1003 SS, RHD4CZ5B13EX1000 SS, RHD4CZ5B13BF2000 |
|  | 207 | **RHD4-02-002-Z2-Block Works - Backfill** |  | 2027-05-09 | 2027-06-22 |  |
|  | 208 | **RHD4-02-002-Block Works - BF-Z2-BLOCK-04** |  | 2027-05-09 | 2027-05-23 |  |
| RHD4CZ2B04BF2000 |  | Backfill Layers works Using Dynamic Compaction Crane (RIC) for Block 04 - (B1.31 23 23.03)-Z2-B04-BF | 9d | 2027-05-09 | 2027-05-23 | RHD4ENMARAPPEW100, RHD4CZ5B14BF2000, RHD4CZ2B04EX1002 |
|  | 209 | **RHD4-02-002-Block Works - BF-Z2-BLOCK-05** |  | 2027-05-24 | 2027-06-22 |  |
| RHD4CZ2B05BF2000 |  | Backfill Layers works Using Dynamic Compaction Crane (RIC) for Block 05 - Stage 1 - (B1.31 23 23.03)-Z2-B05-BF | 5d | 2027-05-24 | 2027-05-29 | RHD4ENMARAPPEW100, RHD4CZ2B04BF2000 |
| RHD4CZ2B05BF2001 |  | Backfill Layers works Using Dynamic Compaction Crane (RIC) for Block 05 - Stage 2 - (B1.31 23 23.03)-Z2-B05-BF | 21d | 2027-05-30 | 2027-06-22 | RHD4ENMARAPPEW100, RHD4CZ2B05BF2000 |
|  | 212 | **RHD4-02-002-Z4-Block Works - Backfill** |  | 2027-04-17 | 2027-08-05 |  |
|  | 214 | **RHD4-02-002-Block Works - BF-Z4-BLOCK-07** |  | 2027-07-11 | 2027-08-05 |  |
| RHD4CZ4B07BF2000 |  | Backfill Layers works Using Dynamic Compaction Crane (RIC) for Block 07 - (B1.31 23 23.03)-Z4-B07-BF | 2d | 2027-07-11 | 2027-07-12 | RHD4ENMARAPPEW100, RHD4CZ2B04BF2000, RHD4CZ4B07EX1001, RHD4CZ4B08BF4000 SS, RHD4CZ4B08BF4000 FF, RHD4CZ2B05BF2001, RHD4CZ7B24BF2000 |
| RHD4CZ4B07BF4000 |  | Soil improvement works by Dynamic Compaction (DC) for Block 07 - Stage 1 - (B1.31 23 23.23.01)-Z4-B07-BF | 21d | 2027-07-13 | 2027-08-05 | RHD4CZ4B07BF2000 |
| RHD4CZ4B07BF4001 |  | Soil improvement works by Dynamic Compaction (DC) for Block 07 - Stage 2 - (B1.31 23 23.23.01)-Z4-B07-BF | 15d | 2027-07-20 | 2027-08-05 | RHD4CZ4B07BF4000 SS, RHD4CZ4B07BF4000 FF |
|  | 215 | **RHD4-02-002-Block Works - BF-Z4-BLOCK-08** |  | 2027-06-03 | 2027-07-12 |  |
| RHD4CZ4B08BF2000 |  | Backfill Layers works Using Dynamic Compaction Crane (RIC) for Block 08 - (B1.31 23 23.03)-Z4-B08-BF | 19d | 2027-06-03 | 2027-06-24 | RHD4ENMARAPPEW100, RHD4CZ4B09BF2001 |
| RHD4CZ4B08BF4000 |  | Soil improvement works by Dynamic Compaction (DC) for Block 08 - Stage 1 - (B1.31 23 23.23.01)-Z4-B08-BF | 15d | 2027-06-26 | 2027-07-12 | RHD4CZ4B08BF2000, RHD4CZ4B08EX1001 |
|  | 216 | **RHD4-02-002-Block Works - BF-Z4-BLOCK-09** |  | 2027-04-17 | 2027-06-02 |  |
| RHD4CZ4B09BF2000 |  | Backfill Layers works Using Dynamic Compaction Crane (RIC) for Block 09 - Stage 1 - (B1.31 23 23.03)-Z4-B09-BF(Completed | 11d | 2027-04-17 | 2027-04-28 | RHD4ENMARAPPEW100, RHD4CZ4B09EX1000 SS |
| RHD4CZ4B09BF2001 |  | Backfill Layers works Using Dynamic Compaction Crane (RIC) for Block 09 - Stage 2 - (B1.31 23 23.03)-Z4-B09-BF | 9d | 2027-05-24 | 2027-06-02 | RHD4ENMARAPPEW100, RHD4CZ2B04BF2000, RHD4CZ4B09BF2000, RHD4ENMSEW2000, RHD4ENMSEW2010, RHD4ENSDZ4APPEW100 SS, RHD4CZ4B09EX1000 |
|  | 217 | **RHD4-02-002-Block Works - BF-Z4-BLOCK-Z4** |  | 2027-05-10 | 2027-06-22 |  |
| RHD4CZ4BZ4BF2000 |  | Backfill Layers works Using Dynamic Compaction Crane (RIC) for Block BZ4 - (B1.31 23 23.03)-Z4-BZ4-BF | 2d | 2027-05-10 | 2027-05-11 | RHD4ENMARAPPEW100, RHD4CZ4B06BF4000, RHD4CZ4B06EX1001 |
| RHD4CZ4BZ4BF4000 |  | Soil improvement works by Dynamic Compaction (DC) for Block BZ4 - Stage 1 - (B1.31 23 23.23.01)-Z4-BZ4-BF | 16d | 2027-05-12 | 2027-06-03 | RHD4CZ4BZ4BF2000, RHD4CZ4B09EX1000 |
| RHD4CZ4BZ4BF4001 |  | Soil improvement works by Dynamic Compaction (DC) for Block BZ4 - Stage 2 - (B1.31 23 23.23.01)-Z4-BZ4-BF | 16d | 2027-06-05 | 2027-06-22 | RHD4CZ4BZ4BF4000 |

| ID | WBS | Task | Duration | Start | Finish | Predecessors |
| --- | --- | --- | --- | --- | --- | --- |
|  | 1 | **RHD4-02-002-Block Works - BF-Z4-BLOCK-06** |  | 2027-04-20 | 2027-05-09 |  |
| RHD4CZ4B06BF4000 |  | Soil improvement works by Dynamic Compaction (DC) for Block 06 - Stage 1 - (B1.31 23 23.23.01)-Z4-B06-BF | 17d | 2027-04-20 | 2027-05-09 | RHD4CZ1B02BF2000 |
|  | 203 | **RHD4-02-002-Z1-Block Works - Backfill** |  | 2027-04-11 | 2027-06-12 |  |
|  | 204 | **RHD4-02-002-Block Works - BF-Z1-BLOCK-01** |  | 2027-04-20 | 2027-05-13 |  |
| RHD4CZ1B01BF2000 |  | Backfill Layers works Using Dynamic Compaction Crane (RIC) for Block 01 - (B1.31 23 23.03)-Z1-B01-BF | 21d | 2027-04-20 | 2027-05-13 | RHD4ENMARAPPEW100, RHD4CZ1B02BF2000 |
|  | 205 | **RHD4-02-002-Block Works - BF-Z1-BLOCK-02** |  | 2027-04-11 | 2027-04-19 |  |
| RHD4CZ1B02BF2000 |  | Backfill Layers works Using Dynamic Compaction Crane (RIC) for Block 02 - (B1.31 23 23.03)-Z1-B02-BF | 8d | 2027-04-11 | 2027-04-19 | RHD4ENMARAPPEW100, RHD4CZ1B03EX1000 SS |
|  | 206 | **RHD4-02-002-Block Works - BF-Z1-BLOCK-03** |  | 2027-05-19 | 2027-06-12 |  |
| RHD4CZ1B03BF2000 |  | Backfill Layers works Using Dynamic Compaction Crane (RIC) for Block 03 - (B1.31 23 23.03)-Z1-B03-BF | 21d | 2027-05-19 | 2027-06-12 | RHD4ENMARAPPEW100, RHD4CZ1B01BF2000 |
|  | 210 | **RHD4-02-002-Z3-Block Works - Backfill** |  | 2027-06-17 | 2027-07-26 |  |
|  | 211 | **RHD4-02-002-Block Works - BF-Z3-BLOCK-Z3** |  | 2027-06-17 | 2027-07-26 |  |
| RHD4CZ3BZ3BF2000 |  | Backfill Layers works Using Dynamic Compaction Crane (RIC) for Block BZ3 - Stage 1 - (B1.31 23 23.03)-Z3-BZ3-BF | 15d | 2027-06-17 | 2027-07-04 | RHD4ENMARAPPEW100, RHD4CZ6BZ6BF2000, RHD4CZ7B23BF2000 |
| RHD4CZ3BZ3BF2001 |  | Backfill Layers works Using Dynamic Compaction Crane (RIC) for Block BZ3 - Stage 2 - (B1.31 23 23.03)-Z3-BZ3-BF | 19d | 2027-07-05 | 2027-07-26 | RHD4ENMARAPPEW100, RHD4CZ3BZ3BF2000, RHD4ENSDZ3APPEW100, RHD4ENMSEW2000, RHD4ENMSEW2010, RHD4ENSDZ3APPEW100 SS, RHD4CZ3BZ3EX1002 |
|  | 251 | **RHD4-02-002-Road Works - RW** |  | 2025-12-24 | 2027-08-04 |  |
|  | 270 | **RHD4-02-002-Z5-Road Works** |  | 2025-12-24 | 2026-05-25 |  |
|  | 271 | **RHD4-02-002-Road Works - RW-Z5-(RD-A-1 /4)** |  | 2025-12-24 | 2026-02-21 |  |
| RHD4CZ5A014RW1000 |  | Excavation works for Road (RD-A-1 /4) - (B1.31 23 16.01)-Z5-A014-RW- Stage 1 | 8d | 2025-12-24 | 2026-01-01 | RHD4ENMSEW2000, RHD4ENMSEW2010, RHD4ENSDZ5APPEW100 SS |
| RHD4CZ5A014RW1001 |  | Excavation works for Road (RD-A-1 /4) - (B1.31 23 16.01)-Z5-A014-RW- Stage 2 | 17d | 2026-01-03 | 2026-01-21 | RHD4CZ5A014RW1000, RHD4ENMSEW2000, RHD4ENMSEW2010, RHD4ENSDZ5APPEW100 SS |
| RHD4CZ5A014RW2000 |  | Backfill Layers works Using Dynamic Compaction Crane (RIC) for Road (RD-A-1 /4) - Stage 1 - (B1.31 23 23.03)-Z5-A014-RW | 11d | 2026-01-03 | 2026-01-14 | RHD4CZ5A014RW1000 |
| RHD4CZ5A014RW3000 |  | Backfill Layers works using Improved fill Material for Road (RD-A-1 /4) - Stage 1 - (B1.31 23 23.01)-Z5-A014-RW | 5d | 2026-01-15 | 2026-01-20 | RHD4CZ5A014RW2000 |
| RHD4CZ5A014RW2001 |  | Backfill Layers works Using Dynamic Compaction Crane (RIC) for Road (RD-A-1 /4) - Stage 2 - (B1.31 23 23.03)-Z5-A014-RW | 11d | 2026-01-22 | 2026-02-03 | RHD4CZ5A014RW2000, RHD4CZ5A014RW1001 |
| RHD4CZ5A014RW3001 |  | Backfill Layers works using Improved fill Material for Road (RD-A-1 /4) - Stage 2 - (B1.31 23 23.01)-Z5-A014-RW | 5d | 2026-02-04 | 2026-02-09 | RHD4CZ5A014RW3000, RHD4CZ5A014RW2001 |
| RHD4CZ5A014RW3002 |  | Backfill Layers works using Improved fill Material for Road (RD-A-1 /4) - Stage 3 - (B1.31 23 23.01)-Z5-A014-RW | 5d | 2026-02-10 | 2026-02-15 | RHD4CZ5A014RW3001 |
| RHD4CZ5A014RW3003 |  | Backfill Layers works using Improved fill Material for Road (RD-A-1 /4) - Stage 4 - (B1.31 23 23.01)-Z5-A014-RW | 5d | 2026-02-16 | 2026-02-21 | RHD4CZ5A014RW3002 |
|  | 272 | **RHD4-02-002-Road Works - RW-Z5-(RD-C-5 /1)** |  | 2026-01-03 | 2026-02-19 |  |
| RHD4CZ5C051RW1000 |  | Excavation works for Road (RD-C-5 /1) - (B1.31 23 16.01)-Z5-C051-RW | 8d | 2026-01-03 | 2026-01-11 | RHD4CZ5A014RW1000, RHD4ENMSEW2000, RHD4ENMSEW2010, RHD4ENSDZ5APPEW100 SS |
| RHD4CZ5C051RW2000 |  | Backfill Layers works Using Dynamic Compaction Crane (RIC) for Road (RD-C-5 /1) - (B1.31 23 23.03)-Z5-C051-RW | 2d | 2026-02-04 | 2026-02-05 | RHD4CZ5C051RW1000, RHD4CZ5A014RW2001 |
| RHD4CZ5C051RW3000 |  | Backfill Layers works using Improved fill Material for Road (RD-C-5 /1) - (B1.31 23 23.01)-Z5-C051-RW | 12d | 2026-02-07 | 2026-02-19 | RHD4CZ5C051RW2000 |
|  | 273 | **RHD4-02-002-Road Works - RW-Z5-(RD-C-6 /1)** |  | 2026-01-12 | 2026-03-28 |  |
| RHD4CZ5C061RW1000 |  | Excavation works for Road (RD-C-6 /1) - (B1.31 23 16.01)-Z5-C061-RW | 2d | 2026-01-12 | 2026-01-13 | RHD4CZ5C051RW1000, RHD4ENMSEW2000, RHD4ENMSEW2010, RHD4ENSDZ5APPEW100 SS |
| RHD4CZ5C061RW2000 |  | Backfill Layers works Using Dynamic Compaction Crane (RIC) for Road (RD-C-6 /1) - (B1.31 23 23.03)-Z5-C061-RW | 3d | 2026-02-07 | 2026-02-09 | RHD4CZ5C061RW1000, RHD4CZ5C051RW2000 |
| RHD4CZ5C061RW3000 |  | Backfill Layers works using Improved fill Material for Road (RD-C-6 /1) - (B1.31 23 23.01)-Z5-C061-RW | 28d | 2026-02-21 | 2026-03-28 | RHD4CZ5C061RW2000, RHD4CZ5C051RW3000 |
|  | 274 | **RHD4-02-002-Road Works - RW-Z5-(RD-L-16)** |  | 2026-01-14 | 2026-04-13 |  |
| RHD4CZ5L016RW1000 |  | Excavation works for Road (RD-L-16) - Stage 1 - (B1.31 23 16.01)-Z5-L016-RW | 42d | 2026-01-14 | 2026-03-04 | RHD4CZ5C061RW1000, RHD4ENMSEW2000, RHD4ENMSEW2010, RHD4ENSDZ5APPEW100 SS |
| RHD4CZ5L016RW1001 |  | Excavation works for Road (RD-L-16) - Stage 2 - (B1.31 23 16.01)-Z5-L016-RW | 8d | 2026-03-05 | 2026-03-14 | RHD4CZ5L016RW1000, RHD4ENMSEW2000, RHD4ENMSEW2010, RHD4ENSDZ5APPEW100 SS |
| RHD4CZ5L016RW2000 |  | Backfill Layers works Using Dynamic Compaction Crane (RIC) for Road (RD-L-16) - (B1.31 23 23.03)-Z5-L016-RW | 3d | 2026-03-15 | 2026-03-17 | RHD4CZ5L016RW1001, RHD4CZ5A014RW2001 |
| RHD4CZ5L016RW3000 |  | Backfill Layers works using Improved fill Material for Road (RD-L-16) - (B1.31 23 23.01)-Z5-L016-RW | 14d | 2026-03-29 | 2026-04-13 | RHD4CZ5L016RW2000, RHD4CZ5C061RW3000 |
|  | 275 | **RHD4-02-002-Road Works - RW-Z5-(RD-L-7)** |  | 2026-03-05 | 2026-04-27 |  |
| RHD4CZ5L07RW1000 |  | Excavation works for Road (RD-L-7) - Stage 1 - (B1.31 23 16.01)-Z5-L07-RW | 18d | 2026-03-05 | 2026-03-28 | RHD4CZ5L016RW1000, RHD4ENMSEW2000, RHD4ENMSEW2010, RHD4ENSDZ5APPEW100 SS, RHD4CZ5A014RW3003 |
| RHD4CZ5L07RW1001 |  | Excavation works for Road (RD-L-7) - Stage 2 - (B1.31 23 16.01)-Z5-L07-RW | 18d | 2026-03-29 | 2026-04-18 | RHD4CZ5L07RW1000, RHD4ENMSEW2000, RHD4ENMSEW2010, RHD4ENSDZ5APPEW100 SS |
| RHD4CZ5L07RW2000 |  | Backfill Layers works Using Dynamic Compaction Crane (RIC) for Road (RD-L-7) - (B1.31 23 23.03)-Z5-L07-RW | 8d | 2026-03-29 | 2026-04-06 | RHD4CZ5L016RW2000, RHD4CZ5L07RW1000 |
| RHD4CZ5L07RW3000 |  | Backfill Layers works using Improved fill Material for Road (RD-L-7) - (B1.31 23 23.01)-Z5-L07-RW | 8d | 2026-04-19 | 2026-04-27 | RHD4CZ5L07RW2000, RHD4CZ5L07RW1001, RHD4CZ5A014RW3003 |
|  | 276 | **RHD4-02-002-Road Works - RW-Z5-(RD-L-8)** |  | 2026-03-29 | 2026-05-25 |  |
| RHD4CZ5L08RW1000 |  | Excavation works for Road (RD-L-8) - (B1.31 23 16.01)-Z5-L08-RW | 38d | 2026-03-29 | 2026-05-11 | RHD4CZ5L07RW1000, RHD4ENMSEW2000, RHD4ENMSEW2010, RHD4ENSDZ5APPEW100 SS, RHD4CZ3L122RW1000 |
| RHD4CZ5L08RW2000 |  | Backfill Layers works Using Dynamic Compaction Crane (RIC) for Road (RD-L-8) - (B1.31 23 23.03)-Z5-L08-RW | 6d | 2026-05-12 | 2026-05-18 | RHD4CZ5L08RW1000, RHD4CZ5L07RW2000 |
| RHD4CZ5L08RW3000 |  | Backfill Layers works using Improved fill Material for Road (RD-L-8) - (B1.31 23 23.01)-Z5-L08-RW | 6d | 2026-05-19 | 2026-05-25 | RHD4CZ5L08RW2000, RHD4CZ5L016RW3000, RHD4CZ5L07RW3000 |
|  | 277 | **RHD4-02-002-Z6-Road Works** |  | 2025-12-24 | 2026-06-24 |  |
|  | 278 | **RHD4-02-002-Road Works - RW-Z6-(RD-A-1 /5)** |  | 2026-05-19 | 2026-06-23 |  |
| RHD4CZ6A015RW1000 |  | Excavation works for Road (RD-A-1 /5) - (B1.31 23 16.01)-Z6-A015-RW | 8d | 2026-05-19 | 2026-05-31 | RHD4ENMSEW2000, RHD4ENMSEW2010, RHD4ENSDZ6APPEW100 SS, RHD4PRSHLDOSST1307 |
| RHD4CZ6A015RW2000 |  | Backfill Layers works Using Dynamic Compaction Crane (RIC) for Road (RD-A-1 /5) - (B1.31 23 23.03)-Z6-A015-RW | 10d | 2026-06-01 | 2026-06-11 | RHD4CZ6A015RW1000 |
| RHD4CZ6A015RW3000 |  | Backfill Layers works using Improved fill Material for Road (RD-A-1 /5) - (B1.31 23 23.01)-Z6-A015-RW | 10d | 2026-06-13 | 2026-06-23 | RHD4CZ6A015RW2000 |
|  | 281 | **RHD4-02-002-Road Works - RW-Z6-(RD-C-6 /2)** |  | 2025-12-24 | 2026-02-04 |  |
| RHD4CZ6C062RW1000 |  | Excavation works for Road (RD-C-6 /2) - (B1.31 23 16.01)-Z6-C062-RW | 18d | 2025-12-24 | 2026-01-13 | RHD4ENMSEW2000, RHD4ENMSEW2010, RHD4ENSDZ6APPEW100 SS |
| RHD4CZ6C062RW2000 |  | Backfill Layers works Using Dynamic Compaction Crane (RIC) for Road (RD-C-6 /2) - (B1.31 23 23.03)-Z6-C062-RW | 3d | 2026-01-14 | 2026-01-17 | RHD4CZ6C062RW1000 |
| RHD4CZ6C062RW3000 |  | Backfill Layers works using Improved fill Material for Road (RD-C-6 /2) - (B1.31 23 23.01)-Z6-C062-RW | 16d | 2026-01-18 | 2026-02-04 | RHD4CZ6C062RW2000 |
|  | 280 | **RHD4-02-002-Road Works - RW-Z6-(RD-C-5 /2)** |  | 2026-06-01 | 2026-06-16 |  |
| RHD4CZ6C052RW1000 |  | Excavation works for Road (RD-C-5 /2) - (B1.31 23 16.01)-Z6-C052-RW | 3d | 2026-06-01 | 2026-06-03 | RHD4ENMSEW2000, RHD4ENMSEW2010, RHD4CZ6C062RW3000, RHD4CZ6A015RW1000, RHD4ENSDZ6APPEW100 SS |
| RHD4CZ6C052RW2000 |  | Backfill Layers works Using Dynamic Compaction Crane (RIC) for Road (RD-C-5 /2) - (B1.31 23 23.03)-Z6-C052-RW | 2d | 2026-06-04 | 2026-06-06 | RHD4CZ6C052RW1000 |
| RHD4CZ6C052RW3000 |  | Backfill Layers works using Improved fill Material for Road (RD-C-5 /2) - (B1.31 23 23.01)-Z6-C052-RW | 9d | 2026-06-07 | 2026-06-16 | RHD4CZ6C052RW2000 |
|  | 279 | **RHD4-02-002-Road Works - RW-Z6-(RD-A-2)** |  | 2026-06-17 | 2026-06-24 |  |
| RHD4CZ6A02RW1000 |  | Excavation works for Road (RD-A-2) - (B1.31 23 16.01)-Z6-A02-RW | 7d | 2026-06-17 | 2026-06-24 | RHD4ENMSEW2000, RHD4ENMSEW2010, RHD4CZ6C052RW3000, RHD4ENSDZ6APPEW100 SS |
|  | 264 | **RHD4-02-002-Z4-Road Works** |  | 2026-01-08 | 2027-03-17 |  |
|  | 294 | **RHD4-02-002-Road Works - RW-Z4-(RD-L-1)** |  | 2026-01-08 | 2027-01-28 |  |
| RHD4CZ4L01RW1000 |  | Excavation works for Road (RD-L-1) - (B1.31 23 16.01)-Z4-L01-RW | 13d | 2026-01-08 | 2026-01-22 | RHD4ENMSEW2000, RHD4ENMSEW2010, RHD4ENSDZ8APPEW100 SS |
| RHD4CZ4L01RW2000 |  | Backfill Layers works Using Dynamic Compaction Crane (RIC) for Road (RD-L-1) - (B1.31 23 23.03)-Z4-L01-RW | 7d | 2026-01-15 | 2026-01-22 | RHD4CZ4L01RW1000 SS, RHD4CZ4L01RW1000 FF |
| RHD4CZ4L01RW3000 |  | Backfill Layers works using Improved fill Material for Road (RD-L-1) - (B1.31 23 23.01)-Z4-L01-RW | 2d | 2027-01-27 | 2027-01-28 | RHD4CZ4L01RW1000, RHD4CZ4L01RW2000, RHD4CZ3C011RW3003 |
|  | 265 | **RHD4-02-002-Road Works - RW-Z4-(RD-A-1 /3)** |  | 2026-01-24 | 2027-02-16 |  |
| RHD4CZ4A013RW1000 |  | Excavation works for Road (RD-A-1 /3) - Stage 1 - (B1.31 23 16.01)-Z4-A013-RW | 11d | 2026-01-24 | 2026-02-04 | RHD4ENMSEW2000, RHD4ENMSEW2010, RHD4ENSDZ4APPEW100 SS, RHD4CZ4L01RW2000 |
| RHD4CZ4A013RW1001 |  | Excavation works for Road (RD-A-1 /3) - Stage 2 - (B1.31 23 16.01)-Z4-A013-RW | 15d | 2026-02-05 | 2026-02-23 | RHD4ENMSEW2000, RHD4ENMSEW2010, RHD4CZ4A013RW1000 |
| RHD4CZ4A013RW2000 |  | Backfill Layers works Using Dynamic Compaction Crane (RIC) for Road (RD-A-1 /3) - (B1.31 23 23.03)-Z4-A013-RW | 15d | 2026-02-24 | 2026-03-12 | RHD4CZ4A013RW1001 |

| ID | WBS | Task | Duration | Start | Finish | Predecessors |
| --- | --- | --- | --- | --- | --- | --- |
| RHD4CZ4A013RW3000 |  | Backfill Layers works using Improved fill Material for Road (RD-A-1 /3) - Stage 1 - (B1.31 23 23.01)-Z4-A013-RW | 3d | 2027-01-30 | 2027-02-01 | RHD4CZ4A013RW2000, RHD4CZ4L01RW3000 |
| RHD4CZ4A013RW3001 |  | Backfill Layers works using Improved fill Material for Road (RD-A-1 /3) - Stage 2 - (B1.31 23 23.01)-Z4-A013-RW | 3d | 2027-02-02 | 2027-02-04 | RHD4CZ4A013RW3000 |
| RHD4CZ4A013RW3002 |  | Backfill Layers works using Improved fill Material for Road (RD-A-1 /3) - Stage 3 - (B1.31 23 23.01)-Z4-A013-RW | 5d | 2027-02-06 | 2027-02-10 | RHD4CZ4A013RW3001 |
| RHD4CZ4A013RW3003 |  | Backfill Layers works using Improved fill Material for Road (RD-A-1 /3) - Stage 4 - (B1.31 23 23.01)-Z4-A013-RW | 5d | 2027-02-11 | 2027-02-16 | RHD4CZ4A013RW3002 |
|  | 267 | **RHD4-02-002-Road Works - RW-Z4-(RD-C-3/1)** |  | 2026-03-14 | 2027-03-15 |  |
| RHD4CZ4C031RW1000 |  | Excavation works for Road (RD-C-3/1) - (B1.31 23 16.01)-Z4-C031-RW | 4d | 2026-03-14 | 2026-03-17 | RHD4ENMSEW2000, RHD4ENMSEW2010, RHD4ENSDZ4APPEW100 SS, RHD4CZ4A013RW2000 |
| RHD4CZ4C031RW2000 |  | Backfill Layers works Using Dynamic Compaction Crane (RIC) for Road (RD-C-3/1) - (B1.31 23 23.03)-Z4-C031-RW | 13d | 2026-03-26 | 2026-04-09 | RHD4CZ4C031RW1000, RHD4CZ4RA02RA2000 |
| RHD4CZ4C031RW3000 |  | Backfill Layers works using Improved fill Material for Road (RD-C-3/1) - (B1.31 23 23.01)-Z4-C031-RW | 19d | 2027-02-17 | 2027-03-15 | RHD4CZ4C031RW2000, RHD4CZ4A013RW3003 |
|  | 268 | **RHD4-02-002-Road Works - RW-Z4-(RD-L-14)** |  | 2026-04-11 | 2027-03-04 |  |
| RHD4CZ4L014RW1000 |  | Excavation works for Road (RD-L-14) - (B1.31 23 16.01)-Z4-L014-RW | 11d | 2026-04-11 | 2026-04-22 | RHD4ENMSEW2000, RHD4ENMSEW2010, RHD4ENSDZ4APPEW100 SS, RHD4CZ4C031RW2000 |
| RHD4CZ4L014RW2000 |  | Backfill Layers works Using Dynamic Compaction Crane (RIC) for Road (RD-L-14) - (B1.31 23 23.03)-Z4-L014-RW | 14.84d | 2026-04-11 | 2026-04-27 | RHD4CZ4L014RW1000 SS |
| RHD4CZ4L014RW3000 |  | Backfill Layers works using Improved fill Material for Road (RD-L-14) - (B1.31 23 23.01)-Z4-L014-RW | 13d | 2027-02-17 | 2027-03-04 | RHD4CZ4L014RW2000, RHD4CZ4A013RW3003 |
|  | 269 | **RHD4-02-002-Road Works - RW-Z4-(RD-L-9)** |  | 2026-04-27 | 2027-03-15 |  |
| RHD4CZ4L09RW1000 |  | Excavation works for Road (RD-L-9) - Stage 1 - (B1.31 23 16.01)-Z4-L09-RW | 11d | 2026-04-27 | 2026-05-10 | RHD4ENMSEW2000, RHD4ENMSEW2010, RHD4ENSDZ4APPEW100 SS, RHD4CZ4L014RW2000 |
| RHD4CZ4L09RW1001 |  | Excavation works for Road (RD-L-9) - Stage 2 - (B1.31 23 16.01)-Z4-L09-RW | 5d | 2026-05-10 | 2026-05-16 | RHD4CZ4L09RW1000, RHD4ENMSEW2000, RHD4ENMSEW2010 |
| RHD4CZ4L09RW1002 |  | Excavation works for Road (RD-L-9) - Stage 3 - (B1.31 23 16.01)-Z4-L09-RW | 11d | 2026-05-16 | 2026-06-01 | RHD4CZ4L09RW1001, RHD4ENMSEW2000, RHD4ENMSEW2010 |
| RHD4CZ4L09RW1003 |  | Excavation works for Road (RD-L-9) - Stage 4 - (B1.31 23 16.01)-Z4-L09-RW | 11d | 2026-06-01 | 2026-06-14 | RHD4CZ4L09RW1002, RHD4ENMSEW2000, RHD4ENMSEW2010 |
| RHD4CZ4L09RW2000 |  | Backfill Layers works Using Dynamic Compaction Crane (RIC) for Road (RD-L-9) - (B1.31 23 23.03)-Z4-L09-RW | 2d | 2026-06-14 | 2026-06-16 | RHD4CZ4L09RW1003 |
| RHD4CZ4L09RW4000 |  | Soil improvement works by Dynamic Compaction (DC) for Road (RD-L-9) - (B1.31 23 23.23.01)-Z4-L09-RW | 14d | 2026-06-16 | 2026-07-02 | RHD4CZ4L09RW2000 |
| RHD4CZ4L09RW3000 |  | Backfill Layers works using Improved fill Material for Road (RD-L-9) - Stage 1 - (B1.31 23 23.01)-Z4-L09-RW | 2d | 2027-03-06 | 2027-03-07 | RHD4CZ4L09RW2000, RHD4CZ4L014RW3000 |
| RHD4CZ4L09RW3001 |  | Backfill Layers works using Improved fill Material for Road (RD-L-9) - Stage 2 - (B1.31 23 23.01)-Z4-L09-RW | 2d | 2027-03-08 | 2027-03-13 | RHD4CZ4L09RW3000 |
| RHD4CZ4L09RW3002 |  | Backfill Layers works using Improved fill Material for Road (RD-L-9) - Stage 3 - (B1.31 23 23.01)-Z4-L09-RW | 2d | 2027-03-14 | 2027-03-15 | RHD4CZ4L09RW3001 |
|  | 266 | **RHD4-02-002-Road Works - RW-Z4-(RD-C-1 /2)** |  | 2026-06-16 | 2027-03-17 |  |
| RHD4CZ4C012RW1000 |  | Excavation works for Road (RD-C-1 /2) - (B1.31 23 16.01)-Z4-C012-RW | 2d | 2026-06-16 | 2026-06-18 | RHD4ENSDZ4APPEW100, RHD4ENMSEW2000, RHD4ENMSEW2010, RHD4CZ4L09RW2000 |
| RHD4CZ4C012RW2000 |  | Backfill Layers works Using Dynamic Compaction Crane (RIC) for Road (RD-C-1 /2) - (B1.31 23 23.03)-Z4-C012-RW | 3d | 2026-06-18 | 2026-06-22 | RHD4CZ4C012RW1000 |
| RHD4CZ4C012RW3000 |  | Backfill Layers works using Improved fill Material for Road (RD-C-1 /2) - (B1.31 23 23.01)-Z4-C012-RW | 2d | 2027-03-16 | 2027-03-17 | RHD4CZ4C012RW2000, RHD4CZ4L09RW3002 |
|  | 290 | **RHD4-02-002-Z8-Road Works** |  | 2026-01-08 | 2027-01-12 |  |
|  | 291 | **RHD4-02-002-Road Works - RW-Z8-(RD-A-1 /1)** |  | 2026-01-08 | 2026-02-03 |  |
| RHD4CZ8A011RW1000 |  | Excavation works for Road (RD-A-1 /1) - (B1.31 23 16.01)-Z8-A011-RW | 9d | 2026-01-08 | 2026-01-18 | RHD4ENMSEW2000, RHD4ENMSEW2010, RHD4ENSDZ8APPEW100 SS |
| RHD4CZ8A011RW2000 |  | Backfill Layers works Using Dynamic Compaction Crane (RIC) for Road (RD-A-1 /1) - (B1.31 23 23.03)-Z8-A011-RW | 9d | 2026-01-19 | 2026-01-28 | RHD4CZ8A011RW1000 |
| RHD4CZ8A011RW3000 |  | Backfill Layers works using Improved fill Material for Road (RD-A-1 /1) - (B1.31 23 23.01)-Z8-A011-RW | 5d | 2026-01-29 | 2026-02-03 | RHD4CZ8A011RW2000 |
|  | 293 | **RHD4-02-002-Road Works - RW-Z8-(RD-C-7/2)** |  |  |  |  |
|  | 295 | **RHD4-02-002-Road Works - RW-Z8-(RD-L-4)** |  | 2026-01-17 | 2026-01-29 |  |
| RHD4CZ8L04RW1000 |  | Excavation works for Road (RD-L-4) - (B1.31 23 16.01)-Z8-L04-RW | 7d | 2026-01-17 | 2026-01-24 | RHD4ENSDZ8APPEW100, RHD4ENMSEW2000, RHD4ENMSEW2010 |
| RHD4CZ8L04RW2000 |  | Backfill Layers works Using Dynamic Compaction Crane (RIC) for Road (RD-L-4) - (B1.31 23 23.03)-Z8-L04-RW | 3d | 2026-01-25 | 2026-01-27 | RHD4CZ8L04RW1000 |
| RHD4CZ8L04RW3000 |  | Backfill Layers works using Improved fill Material for Road (RD-L-4) - (B1.31 23 23.01)-Z8-L04-RW | 2d | 2026-01-28 | 2026-01-29 | RHD4CZ8L04RW2000 |
|  | 292 | **RHD4-02-002-Road Works - RW-Z8-(RD-C-1/4)** |  | 2027-01-02 | 2027-01-12 |  |
| RHD4CZ8C014RW1000 |  | Excavation works for Road (RD-C-1/4) - (B1.31 23 16.01)-Z8-C014-RW | 4d | 2027-01-02 | 2027-01-05 | RHD4ENSDZ8APPEW100, RHD4ENMSEW2000, RHD4ENMSEW2010, RHD4CZ8L04ST6100 |
| RHD4CZ8C014RW2000 |  | Backfill Layers works Using Dynamic Compaction Crane (RIC) for Road (RD-C-1/4) - (B1.31 23 23.03)-Z8-C014-RW | 4d | 2027-01-06 | 2027-01-10 | RHD4ENSDZ8SUBEW100, RHD4CZ8C014RW1000 |
| RHD4CZ8C014RW3000 |  | Backfill Layers works using Improved fill Material for Road (RD-C-1/4) - (B1.31 23 23.01)-Z8-C014-RW | 2d | 2027-01-11 | 2027-01-12 | RHD4CZ8C014RW2000 |
|  | 282 | **RHD4-02-002-Z7-Road Works** |  | 2025-12-24 | 2026-08-27 |  |
|  | 286 | **RHD4-02-002-Road Works - RW-Z7-(RD-C-3/2)** |  | 2025-12-24 | 2026-03-01 |  |
| RHD4CZ7C032RW1000 |  | Excavation works for Road (RD-C-3/2) - Stage 1 - (B1.31 23 16.01)-Z7-C032-RW | 6d | 2025-12-24 | 2025-12-30 | RHD4ENMSEW2000, RHD4ENMSEW2010, RHD4ENSDZ7APPEW100 SS |
| RHD4CZ7C032RW1001 |  | Excavation works for Road (RD-C-3/2) - Stage 2 - (B1.31 23 16.01)-Z7-C032-RW | 17d | 2025-12-31 | 2026-01-19 | RHD4ENMSEW2000, RHD4ENMSEW2010, RHD4CZ7C032RW1000 |
| RHD4CZ7C032RW1002 |  | Excavation works for Road (RD-C-3/2) - Stage 3 - (B1.31 23 16.01)-Z7-C032-RW | 13d | 2026-01-20 | 2026-02-03 | RHD4ENMSEW2000, RHD4ENMSEW2010, RHD4CZ7C032RW1001 |
| RHD4CZ7C032RW1003 |  | Excavation works for Road (RD-C-3/2) - Stage 4 - (B1.31 23 16.01)-Z7-C032-RW(Completed) | 17d | 2026-02-04 | 2026-02-24 | RHD4ENMSEW2000, RHD4ENMSEW2010, RHD4CZ7C032RW1002 |
| RHD4CZ7C032RW2000 |  | Backfill Layers works Using Dynamic Compaction Crane (RIC) for Road (RD-C-3/2) - (B1.31 23 23.03)-Z7-C032-RW | 2d | 2026-02-25 | 2026-02-26 | RHD4ENMSEW2000, RHD4ENMSEW2010, RHD4CZ7C032RW1002, RHD4CZ7C032RW1003 |
| RHD4CZ7C032RW3000 |  | Backfill Layers works using Improved fill Material for Road (RD-C-3/2) - (B1.31 23 23.01)-Z7-C032-RW | 2d | 2026-02-28 | 2026-03-01 | RHD4CZ7C032RW2000 |
|  | 289 | **RHD4-02-002-Road Works - RW-Z7-(RD-L-3)** |  | 2025-12-31 | 2026-03-31 |  |
| RHD4CZ7L03RW1000 |  | Excavation works for Road (RD-L-3) - (B1.31 23 16.01)-Z7-L03-RW | 45d | 2025-12-31 | 2026-02-21 | RHD4ENMSEW2000, RHD4ENMSEW2010, RHD4ENSDZ7APPEW100 SS, RHD4CZ7C032RW1000 |
| RHD4CZ7L03RW2000 |  | Backfill Layers works Using Dynamic Compaction Crane (RIC) for Road (RD-L-3) - (B1.31 23 23.03)-Z7-L03-RW | 14d | 2026-02-23 | 2026-03-10 | RHD4CZ7L03RW1000 |
| RHD4CZ7L03RW3000 |  | Backfill Layers works using Improved fill Material for Road (RD-L-3) - (B1.31 23 23.01)-Z7-L03-RW | 16d | 2026-03-11 | 2026-03-31 | RHD4CZ7L03RW2000 |
|  | 287 | **RHD4-02-002-Road Works - RW-Z7-(RD-L-13/1)** |  | 2025-12-31 | 2026-01-22 |  |
| RHD4CZ7L131RW1000 |  | Excavation works for Road (RD-L-13/1) - (B1.31 23 16.01)-Z7-L131-RW | 17d | 2025-12-31 | 2026-01-19 | RHD4ENMSEW2000, RHD4ENMSEW2010, RHD4ENSDZ7APPEW100 SS, RHD4CZ7L03RW1000 SS |
| RHD4CZ7L131RW2000 |  | Backfill Layers works Using Dynamic Compaction Crane (RIC) for Road (RD-L-13/1) - (B1.31 23 23.03)-Z7-L131-RW | 3d | 2025-12-31 | 2026-01-03 | RHD4CZ7L131RW1000 SS |
| RHD4CZ7L131RW3000 |  | Backfill Layers works using Improved fill Material for Road (RD-L-13/1) - (B1.31 23 23.01)-Z7-L131-RW | 17d | 2026-01-04 | 2026-01-22 | RHD4CZ7L131RW2000 |
|  | 284 | **RHD4-02-002-Road Works - RW-Z7-(RD-C-1/3)** |  | 2026-08-20 | 2026-08-27 |  |
| RHD4CZ7C013RW1000 |  | Excavation works for Road (RD-C-1/3) - (B1.31 23 16.01)-Z7-C013-RW | 2d | 2026-08-20 | 2026-08-22 | RHD4ENMSEW2000, RHD4ENMSEW2010, RHD4CZ7A012ST1106 |
| RHD4CZ7C013RW2000 |  | Backfill Layers works Using Dynamic Compaction Crane (RIC) for Road (RD-C-1/3) - (B1.31 23 23.03)-Z7-C013-RW | 3d | 2026-08-23 | 2026-08-25 | RHD4CZ7C013RW1000 |
| RHD4CZ7C013RW3000 |  | Backfill Layers works using Improved fill Material for Road (RD-C-1/3) - (B1.31 23 23.01)-Z7-C013-RW | 2d | 2026-08-26 | 2026-08-27 | RHD4CZ7C013RW2000, RHD4CZ7L03RW3000 |
|  | 288 | **RHD4-02-002-Road Works - RW-Z7-(RD-L-15)** |  | 2025-12-31 | 2026-03-08 |  |
| RHD4CZ7L015RW1000 |  | Excavation works for Road (RD-L-15) - (B1.31 23 16.01)-Z7-L015-RW | 29d | 2025-12-31 | 2026-02-02 | RHD4ENMSEW2000, RHD4ENMSEW2010, RHD4ENSDZ7APPEW100 SS, RHD4CZ7L131RW1000 SS |
| RHD4CZ7L015RW2000 |  | Backfill Layers works Using Dynamic Compaction Crane (RIC) for Road (RD-L-15) - (B1.31 23 23.03)-Z7-L015-RW | 45d | 2026-01-04 | 2026-02-25 | RHD4CZ7L131RW2000, RHD4CZ7L015RW1000 SS |
| RHD4CZ7L015RW3000 |  | Backfill Layers works using Improved fill Material for Road (RD-L-15) - (B1.31 23 23.01)-Z7-L015-RW | 9d | 2026-02-26 | 2026-03-08 | RHD4CZ7L015RW2000, RHD4CZ7L131RW3000 SS |
|  | 283 | **RHD4-02-002-Road Works - RW-Z7-(RD-A-1 /2)** |  | 2026-02-03 | 2026-04-04 |  |
| RHD4CZ7A012RW1000 |  | Excavation works for Road (RD-A-1 /2) - (B1.31 23 16.01)-Z7-A012-RW | 26d | 2026-02-03 | 2026-03-05 | RHD4ENMSEW2000, RHD4ENMSEW2010, RHD4ENSDZ7APPEW100 SS, RHD4CZ7L131RW1000 SS, RHD4CZ7L015RW1000 |
| RHD4CZ7A012RW2000 |  | Backfill Layers works Using Dynamic Compaction Crane (RIC) for Road (RD-A-1 /2) - (B1.31 23 23.03)-Z7-A012-RW | 10d | 2026-03-07 | 2026-03-17 | RHD4CZ7L131RW2000, RHD4CZ7A012RW1000, RHD4CZ7L131RW3000 SS |
| RHD4CZ7A012RW3000 |  | Backfill Layers works using Improved fill Material for Road (RD-A-1 /2) - (B1.31 23 23.01)-Z7-A012-RW | 13d | 2026-03-18 | 2026-04-04 | RHD4CZ7A012RW2000, RHD4CZ7L015RW3000 SS |
|  | 285 | **RHD4-02-002-Road Works - RW-Z7-(RD-C-2)** |  | 2026-06-17 | 2026-07-02 |  |
| RHD4CZ7C02RW1000 |  | Excavation works for Road (RD-C-2) - (B1.31 23 16.01)-Z7-C02-RW(Completed) | 8d | 2026-06-17 | 2026-06-25 | RHD4ENMSEW2000, RHD4ENMSEW2010, RHD4ENSDZ7APPEW100 SS, RHD4CZ6A02RW1000 SS |

| ID | WBS | Task | Duration | Start | Finish | Predecessors |
| --- | --- | --- | --- | --- | --- | --- |
| RHD4CZ7C02RW2000 |  | Backfill Layers works Using Dynamic Compaction Crane (RIC) for Road (RD-C-2) - (B1.31 23 23.03)-Z7-C02-RW | 4d | 2026-06-27 | 2026-06-30 | RHD4ENMSEW2000, RHD4ENMSEW2010, RHD4ENSDZ7APPEW100 SS, RHD4CZ6A02RW1000 SS, RHD4CZ7C02RW1000 |
| RHD4CZ7C02RW3000 |  | Backfill Layers works using Improved fill Material for Road (RD-C-2) - (B1.31 23 23.01)-Z7-C02-RW | 2d | 2026-07-01 | 2026-07-02 | RHD4CZ7C02RW2000 |
|  | 296 | **RHD4-02-002-Z9-Road Works** |  | 2025-12-24 | 2026-02-19 |  |
|  | 297 | **RHD4-02-002-Road Works - RW-Z9-(RD-C-7/1)** |  | 2026-01-22 | 2026-02-19 |  |
| RHD4CZ9C071RW1000 |  | Excavation works for Road (RD-C-7/1) - (B1.31 23 16.01)-Z9-C071-RW | 11d | 2026-01-22 | 2026-02-03 | RHD4CZ5A014RW1001, RHD4ENMSEW2000, RHD4ENMSEW2010, RHD4ENSDZ9APPEW100 SS |
| RHD4CZ9C071RW2000 |  | Backfill Layers works Using Dynamic Compaction Crane (RIC) for Road (RD-C-7/1) - (B1.31 23 23.03)-Z9-C071-RW | 3d | 2026-02-04 | 2026-02-07 | RHD4CZ5A014RW2001, RHD4CZ9C071RW1000 SS |
| RHD4CZ9C071RW3000 |  | Backfill Layers works using Improved fill Material for Road (RD-C-7/1) - (B1.31 23 23.01)-Z9-C071-RW | 11d | 2026-02-08 | 2026-02-19 | RHD4CZ9C071RW2000 |
|  | 299 | **RHD4-02-002-Road Works - RW-Z9-(RD-L-5)** |  | 2025-12-24 | 2026-01-19 |  |
| RHD4CZ9L05RW1000 |  | Excavation works for Road (RD-L-5) - (B1.31 23 16.01)-Z9-L05-RW | 2d | 2025-12-24 | 2025-12-25 | RHD4ENMSEW2000, RHD4ENMSEW2010 |
| RHD4CZ9L05RW2000 |  | Backfill Layers works Using Dynamic Compaction Crane (RIC) for Road (RD-L-5) - (B1.31 23 23.03)-Z9-L05-RW | 2d | 2026-01-15 | 2026-01-17 | RHD4CZ5A014RW2000, RHD4CZ9L05RW1000 |
| RHD4CZ9L05RW3000 |  | Backfill Layers works using Improved fill Material for Road (RD-L-5) - (B1.31 23 23.01)-Z9-L05-RW | 2d | 2026-01-18 | 2026-01-19 | RHD4CZ9L05RW2000 |
|  | 300 | **RHD4-02-002-Road Works - RW-Z9-(RD-L-6)** |  | 2025-12-24 | 2026-01-29 |  |
| RHD4CZ9L06RW1000 |  | Excavation works for Road (RD-L-6) - (B1.31 23 16.01)-Z9-L06-RW(Completed) | 22d | 2025-12-24 | 2026-01-18 | RHD4ENMSEW2000, RHD4ENMSEW2010, RHD4ENSDZ9APPEW100 SS, RHD4CZ9L05RW1000 FF |
| RHD4CZ9L06RW2000 |  | Backfill Layers works Using Dynamic Compaction Crane (RIC) for Road (RD-L-6) - (B1.31 23 23.03)-Z9-L06-RW | 6d | 2026-01-19 | 2026-01-25 | RHD4CZ9L05RW2000, RHD4ENMSEW2000, RHD4ENMSEW2010, RHD4ENSDZ9APPEW100 SS, RHD4CZ9L05RW1000, RHD4CZ9L06RW1000 |
| RHD4CZ9L06RW3000 |  | Backfill Layers works using Improved fill Material for Road (RD-L-6) - (B1.31 23 23.01)-Z9-L06-RW | 4d | 2026-01-26 | 2026-01-29 | RHD4CZ9L06RW2000, RHD4CZ9L05RW3000 |
|  | 298 | **RHD4-02-002-Road Works - RW-Z9-(RD-L-2)** |  | 2026-01-22 | 2026-02-16 |  |
| RHD4CZ9L02RW1000 |  | Excavation works for Road (RD-L-2) - (B1.31 23 16.01)-Z9-L02-RW | 10d | 2026-01-22 | 2026-02-02 | RHD4CZ5A014RW1001, RHD4ENMSEW2000, RHD4ENMSEW2010, RHD4ENSDZ9APPEW100 SS |
| RHD4CZ9L02RW2000 |  | Backfill Layers works Using Dynamic Compaction Crane (RIC) for Road (RD-L-2) - (B1.31 23 23.03)-Z9-L02-RW | 5d | 2026-02-04 | 2026-02-09 | RHD4CZ9L02RW1000 SS, RHD4CZ9C071RW2000 SS |
| RHD4CZ9L02RW3000 |  | Backfill Layers works using Improved fill Material for Road (RD-L-2) - (B1.31 23 23.01)-Z9-L02-RW | 6d | 2026-02-10 | 2026-02-16 | RHD4CZ9L02RW2000 |
|  | 260 | **RHD4-02-002-Z3-Road Works** |  | 2026-02-28 | 2027-01-26 |  |
|  | 261 | **RHD4-02-002-Road Works - RW-Z3-(RD-C-1 /1)** |  | 2026-03-25 | 2027-01-26 |  |
| RHD4CZ3C011RW1000 |  | Excavation works for Road (RD-C-1 /1) - Stage 1 - (B1.31 23 16.01)-Z3-C011-RW | 11d | 2026-03-25 | 2026-04-06 | RHD4ENMSEW2000, RHD4ENMSEW2010, RHD4CZ2L011RW1000 |
| RHD4CZ3C011RW1001 |  | Excavation works for Road (RD-C-1 /1) - Stage 2 - (B1.31 23 16.01)-Z3-C011-RW | 3d | 2026-04-07 | 2026-04-09 | RHD4ENMSEW2000, RHD4ENMSEW2010, RHD4CZ3C011RW1000 |
| RHD4CZ3C011RW1002 |  | Excavation works for Road (RD-C-1 /1) - Stage 3 - (B1.31 23 16.01)-Z3-C011-RW | 5d | 2026-04-11 | 2026-04-15 | RHD4ENMSEW2000, RHD4ENMSEW2010, RHD4CZ3C011RW1001 |
| RHD4CZ3C011RW1003 |  | Excavation works for Road (RD-C-1 /1) - Stage 4 - (B1.31 23 16.01)-Z3-C011-RW | 11d | 2026-04-16 | 2026-04-28 | RHD4ENMSEW2000, RHD4ENMSEW2010, RHD4CZ3C011RW1002 |
| RHD4CZ3C011RW2000 |  | Backfill Layers works Using Dynamic Compaction Crane (RIC) for Road (RD-C-1 /1) - (B1.31 23 23.03)-Z3-C011-RW | 6d | 2026-04-29 | 2026-05-05 | RHD4CZ3C011RW1003 |
| RHD4CZ3C011RW3000 |  | Backfill Layers works using Improved fill Material for Road (RD-C-1 /1) - Stage 1 - (B1.31 23 23.01)-Z3-C011-RW | 2d | 2027-01-18 | 2027-01-19 | RHD4CZ3C011RW2000, RHD4CZ2C082RW3000 |
| RHD4CZ3C011RW3001 |  | Backfill Layers works using Improved fill Material for Road (RD-C-1 /1) - Stage 2 - (B1.31 23 23.01)-Z3-C011-RW | 2d | 2027-01-20 | 2027-01-21 | RHD4CZ3C011RW3000 |
| RHD4CZ3C011RW3002 |  | Backfill Layers works using Improved fill Material for Road (RD-C-1 /1) - Stage 3 - (B1.31 23 23.01)-Z3-C011-RW | 2d | 2027-01-23 | 2027-01-24 | RHD4CZ3C011RW3001 |
| RHD4CZ3C011RW3003 |  | Backfill Layers works using Improved fill Material for Road (RD-C-1 /1) - Stage 4 - (B1.31 23 23.01)-Z3-C011-RW | 2d | 2027-01-25 | 2027-01-26 | RHD4CZ3C011RW3002 |
|  | 263 | **RHD4-02-002-Road Works - RW-Z3-(RD-L-12/2)** |  | 2026-02-28 | 2027-01-21 |  |
| RHD4CZ3L122RW1000 |  | Excavation works for Road (RD-L-12/2) - (B1.31 23 16.01)-Z3-L122-RW | 13d | 2026-02-28 | 2026-03-14 | RHD4ENMSEW2000, RHD4ENMSEW2010, RHD4ENSDZ3APPEW100 SS, RHD4PRSHLDOSSW1007 |
| RHD4CZ3L122RW2000 |  | Backfill Layers works Using Dynamic Compaction Crane (RIC) for Road (RD-L-12/2) - (B1.31 23 23.03)-Z3-L122-RW | 25d | 2026-06-13 | 2026-07-11 | RHD4PRSHLDOSST1003 SS, RHD4PRSHLDOSST1007 SS, RHD4CZ3L122RW1000 |
| RHD4CZ3L122RW3000 |  | Backfill Layers works using Improved fill Material for Road (RD-L-12/2) - Stage 1 - (B1.31 23 23.01)-Z3-L122-RW | 2d | 2027-01-16 | 2027-01-17 | RHD4CZ3L122RW2000, RHD4CZ5C051ST1501, RHD4CZ5L016ST1509, RHD4CZ5L016ST1503, RHD4CZ5L016ST3501, RHD4CZ5L016ST1502, RHD4CZ5L016ST1500, RHD4CZ5C061ST3501, RHD4CZ7RA03RA3000, RHD4CZ9L06RW3000, RHD4CZ7C032RW3000, RHD4CZ8L04RW3000, RHD4CZ2L011RW3000 |
| RHD4CZ3L122RW3001 |  | Backfill Layers works using Improved fill Material for Road (RD-L-12/2) - Stage 2 - (B1.31 23 23.01)-Z3-L122-RW | 2d | 2027-01-18 | 2027-01-19 | RHD4CZ3L122RW3000, RHD4CZ1C081ST1504 |
| RHD4CZ3L122RW3002 |  | Backfill Layers works using Improved fill Material for Road (RD-L-12/2) - Stage 3 - (B1.31 23 23.01)-Z3-L122-RW | 2d | 2027-01-20 | 2027-01-21 | RHD4CZ3L122RW3001, RHD4CZ5L07ST3502, RHD4CZ5A014ST3500, RHD4CZ5A014ST3400, RHD4CZ5A014ST3501, RHD4CZ5C061ST2500, RHD4CZ5C051SW3501, RHD4CZ5C051ST8500 |
|  | 262 | **RHD4-02-002-Road Works - RW-Z3-(RD-C-8 /3)** |  | 2026-09-10 | 2027-01-21 |  |
| RHD4CZ3C083RW1000 |  | Excavation works for Road (RD-C-8 /3) - (B1.31 23 16.01)-Z3-C083-RW | 21d | 2026-09-10 | 2026-10-05 | RHD4ENSDZ3APPEW100, RHD4ENMSEW2000, RHD4ENMSEW2010, RHD4CZ3L122RW1000, RHD4CZ3L122ST1501, RHD4CZ3C011RW1002 |
| RHD4CZ3C083RW2000 |  | Backfill Layers works Using Dynamic Compaction Crane (RIC) for Road (RD-C-8 /3) - (B1.31 23 23.03)-Z3-C083-RW | 2d | 2026-10-06 | 2026-10-07 | RHD4CZ3C083RW1000, RHD4CZ3L122RW2000 |
| RHD4CZ2C083RW3000 |  | Backfill Layers works using Improved fill Material for Road (RD-C-8 /3) - Stage 1 - (B1.31 23 23.01)-Z2-C083-RW | 2d | 2027-01-18 | 2027-01-19 | RHD4CZ3C083RW2000, RHD4CZ2C082RW3000 |
| RHD4CZ3C083RW3001 |  | Backfill Layers works using Improved fill Material for Road (RD-C-8 /3) - Stage 2 - (B1.31 23 23.01)-Z3-C083-RW | 2d | 2027-01-20 | 2027-01-21 | RHD4CZ2C083RW3000 |
|  | 255 | **RHD4-02-002-Z2-Road Works** |  | 2026-02-28 | 2027-08-04 |  |
|  | 259 | **RHD4-02-002-Road Works - RW-Z2-(RD-L-12/1)** |  |  |  |  |
|  | 257 | **RHD4-02-002-Road Works - RW-Z2-(RD-L-10/2)** |  | 2026-02-28 | 2027-08-04 |  |
| RHD4CZ2L102RW1000 |  | Excavation works for Road (RD-L-10/2) - (B1.31 23 16.01)-Z2-L102-RW(Completed) | 18d | 2026-02-28 | 2026-03-19 | RHD4ENMSEW2000, RHD4ENMSEW2010, RHD4ENSDZ2APPEW100 SS, RHD4PRSHLDOSSW1007 |
| RHD4CZ2L102RW2000 |  | Backfill Layers works Using Dynamic Compaction Crane (RIC) for Road (RD-L-10/2) - (B1.31 23 23.03)-Z2-L102-RW(Completed) | 16d | 2026-02-28 | 2026-03-17 | RHD4CZ2L102RW1000 SS |
| RHD4CZ1L102RW3000 |  | Backfill Layers works using Improved fill Material for Road (RD-L-10/2) - Stage 1 - (B1.31 23 23.01)-Z1-L102-RW | 2d | 2027-07-29 | 2027-07-31 | RHD4CZ2L102RW2000, RHD4ENMSEW2000, RHD4ENMSEW2010, RHD4ENSDZ2APPEW100 SS, RHD4CZ2L102RW1000, RHD4CZ2L102CCTV6100, RHD4CZ2L102CCTV6100 FF |
| RHD4CZ2L102RW3001 |  | Backfill Layers works using Improved fill Material for Road (RD-L-10/2) - Stage 2 - (B1.31 23 23.01)-Z2-L102-RW | 2d | 2027-08-01 | 2027-08-02 | RHD4CZ1L102RW3000 |
| RHD4CZ2L102RW3002 |  | Backfill Layers works using Improved fill Material for Road (RD-L-10/2) - Stage 3 - (B1.31 23 23.01)-Z2-L102-RW | 2d | 2027-08-03 | 2027-08-04 | RHD4CZ2L102RW3001 |
|  | 258 | **RHD4-02-002-Road Works - RW-Z2-(RD-L-11)** |  | 2026-03-23 | 2027-01-14 |  |
| RHD4CZ2L011RW1000 |  | Excavation works for Road (RD-L-11) - (B1.31 23 16.01)-Z2-L011-RW | 2d | 2026-03-23 | 2026-03-24 | RHD4ENMSEW2000, RHD4ENMSEW2010, RHD4CZ2L102RW2000, RHD4ENSDZ2APPEW100 SS, RHD4CZ2L102RW1000 |
| RHD4CZ2L011RW2000 |  | Backfill Layers works Using Dynamic Compaction Crane (RIC) for Road (RD-L-11) - (B1.31 23 23.03)-Z2-L011-RW | 2d | 2026-03-25 | 2026-03-26 | RHD4CZ2L011RW1000 |
| RHD4CZ2L011RW3000 |  | Backfill Layers works using Improved fill Material for Road (RD-L-11) - (B1.31 23 23.01)-Z2-L011-RW | 2d | 2027-01-13 | 2027-01-14 | RHD4CZ2L011RW2000, RHD4CZ2L011ICT2400 |
|  | 256 | **RHD4-02-002-Road Works - RW-Z2-(RD-C-8 /2)** |  | 2026-03-28 | 2027-01-17 |  |
| RHD4CZ2C082RW1000 |  | Excavation works for Road (RD-C-8 /2) - (B1.31 23 16.01)-Z2-C082-RW | 10d | 2026-03-28 | 2026-04-07 | RHD4ENMSEW2000, RHD4ENMSEW2010, RHD4CZ2L011RW2000 |
| RHD4CZ2C082RW2000 |  | Backfill Layers works Using Dynamic Compaction Crane (RIC) for Road (RD-C-8 /2) - (B1.31 23 23.03)-Z2-C082-RW | 2d | 2026-04-08 | 2026-04-09 | RHD4CZ2C082RW1000, RHD4CZ2L011RW2000 |
| RHD4CZ2C082RW3000 |  | Backfill Layers works using Improved fill Material for Road (RD-C-8 /2) - (B1.31 23 23.01)-Z2-C082-RW | 2d | 2027-01-16 | 2027-01-17 | RHD4CZ2C082RW2000, RHD4CZ2L011RW3000 |
|  | 252 | **RHD4-02-002-Z1-Road Works** |  | 2026-03-25 | 2027-07-14 |  |
|  | 254 | **RHD4-02-002-Road Works - RW-Z1-(RD-L-10/1)** |  | 2026-03-25 | 2027-07-14 |  |
| RHD4CZ1L101RW1000 |  | Excavation works for Road (RD-L-10/1) - (B1.31 23 16.01)-Z1-L101-RW | 8d | 2026-03-25 | 2026-04-02 | RHD4ENMSEW2000, RHD4ENMSEW2010, RHD4CZ2L011RW1000 |
| RHD4CZ1L101RW2000 |  | Backfill Layers works Using Dynamic Compaction Crane (RIC) for Road (RD-L-10/1) - (B1.31 23 23.03)-Z1-L101-RW | 4d | 2026-04-04 | 2026-04-07 | RHD4CZ1L101RW1000 |
| RHD4CZ1L101RW3000 |  | Backfill Layers works using Improved fill Material for Road (RD-L-10/1) - (B1.31 23 23.01)-Z1-L101-RW | 2d | 2027-07-13 | 2027-07-14 | RHD4CZ1L101CCTV6100 |
|  | 253 | **RHD4-02-002-Road Works - RW-Z1-(RD-C-8 /1)** |  | 2026-04-08 | 2027-06-23 |  |
| RHD4CZ1C081RW1000 |  | Excavation works for Road (RD-C-8 /1) - (B1.31 23 16.01)-Z1-C081-RW | 12d | 2026-04-08 | 2026-04-21 | RHD4ENMSEW2000, RHD4ENMSEW2010, RHD4ENSDZ2APPEW100 SS, RHD4CZ2L102RW1000, RHD4CZ1L101RW2000 |
| RHD4CZ1C081RW2000 |  | Backfill Layers works Using Dynamic Compaction Crane (RIC) for Road (RD-C-8 /1) - (B1.31 23 23.03)-Z1-C081-RW | 12d | 2026-04-22 | 2026-05-05 | RHD4CZ1C081RW1000 |
| RHD4CZ1C081RW3000 |  | Backfill Layers works using Improved fill Material for Road (RD-C-8 /1) - (B1.31 23 23.01)-Z1-C081-RW | 2d | 2027-06-22 | 2027-06-23 | RHD4CZ1C081CCTV6100 |
|  | 301 | **RHD4-02-002-Round About - RA** |  | 2025-12-22 | 2026-07-29 |  |
|  | 302 | **RHD4-02-002-Z3-Round Abouts** |  |  |  |  |
|  | 303 | **RHD4-02-002-Road Works - RW-Z3-(ROUND-06)** |  |  |  |  |
|  | 304 | **RHD4-02-002-Z4-Round Abouts** |  | 2026-02-05 | 2026-03-28 |  |

| ID | WBS | Task | Duration | Start | Finish | Predecessors |
| --- | --- | --- | --- | --- | --- | --- |
|  | 305 | **RHD4-02-002-Road Works - RW-Z4-(ROUND-02)** |  | 2026-02-05 | 2026-03-28 |  |
| RHD4CZ4RA02RA1000 |  | Excavation works for (ROUND-02) - (B1.31 23 16.01)-Z4-RA02-RA | 13d | 2026-02-05 | 2026-02-19 | RHD4CZ4A013RW1001 SS |
| RHD4CZ4RA02RA2000 |  | Backfill Layers works Using Dynamic Compaction Crane (RIC) for (ROUND-02) - (B1.31 23 23.03)-Z4-RA02-RA | 9d | 2026-03-14 | 2026-03-25 | RHD4CZ4RA02RA1000, RHD4CZ4A013RW2000 |
| RHD4CZ4RA02RA3000 |  | Backfill Layers works using Improved fill Material for (ROUND-02) - (B1.31 23 23.01)-Z4-RA02-RA | 2d | 2026-03-26 | 2026-03-28 | RHD4CZ4RA02RA2000 |
|  | 306 | **RHD4-02-002-Z5-Round Abouts** |  | 2026-02-21 | 2026-04-02 |  |
|  | 307 | **RHD4-02-002-Road Works - RW-Z5-(ROUND-07)** |  | 2026-02-21 | 2026-04-02 |  |
| RHD4CZ5RA07RA1000 |  | Excavation works for (ROUND-07) - (B1.31 23 16.01)-Z5-RA07-RA | 12d | 2026-02-21 | 2026-03-07 | RHD4CZ5A014RW1001, RHD4CZ5C061RW1000, RHD4CZ4RA02RA1000 |
| RHD4CZ5RA07RA2000 |  | Backfill Layers works Using Dynamic Compaction Crane (RIC) for (ROUND-07) - (B1.31 23 23.03)-Z5-RA07-RA | 2d | 2026-03-14 | 2026-03-15 | RHD4CZ5RA07RA1000, RHD4CZ5A014RW2001, RHD4CZ5C061RW2000, RHD4CZ4RA02RA2000 SS |
| RHD4CZ5RA07RA3000 |  | Backfill Layers works using Improved fill Material for (ROUND-07) - (B1.31 23 23.01)-Z5-RA07-RA | 5d | 2026-03-29 | 2026-04-02 | RHD4CZ5RA07RA2000, RHD4CZ5A014RW3001, RHD4CZ5C061RW3000 |
|  | 308 | **RHD4-02-002-Z6-Round Abouts** |  | 2025-12-22 | 2026-01-14 |  |
|  | 309 | **RHD4-02-002-Road Works - RW-Z6-(ROUND-01)** |  | 2025-12-22 | 2026-01-14 |  |
| RHD4CZ6RA01RA1000 |  | Excavation works for (ROUND-01) - (B1.31 23 16.01)-Z6-RA01-RA | 13d | 2025-12-22 | 2026-01-05 | RHD4ENSDZ6APPEW100 SS |
| RHD4CZ6RA01RA2000 |  | Backfill Layers works Using Dynamic Compaction Crane (RIC) for (ROUND-01) - (B1.31 23 23.03)-Z6-RA01-RA | 2d | 2026-01-06 | 2026-01-07 | RHD4CZ6RA01RA1000 |
| RHD4CZ6RA01RA3000 |  | Backfill Layers works using Improved fill Material for (ROUND-01) - (B1.31 23 23.01)-Z6-RA01-RA | 6d | 2026-01-08 | 2026-01-14 | RHD4CZ6RA01RA2000 |
|  | 310 | **RHD4-02-002-Z7-Round Abouts** |  | 2026-06-17 | 2026-07-29 |  |
|  | 311 | **RHD4-02-002-Road Works - RW-Z7-(ROUND-03)** |  | 2026-06-17 | 2026-07-20 |  |
| RHD4CZ7RA03RA1000 |  | Excavation works for (ROUND-03) - (B1.31 23 16.01)-Z7-RA03-RA(Completed) | 29d | 2026-06-17 | 2026-07-20 | RHD4CZ7C02RW1000 SS |
| RHD4CZ7RA03RA2000 |  | Backfill Layers works Using Dynamic Compaction Crane (RIC) for (ROUND-03) - (B1.31 23 23.03)-Z7-RA03-RA(Completed) | 27d | 2026-06-17 | 2026-07-18 | RHD4CZ7RA03RA1000 SS |
| RHD4CZ7RA03RA3000 |  | Backfill Layers works using Improved fill Material for (ROUND-03) - (B1.31 23 23.01)-Z7-RA03-RA | 2d | 2026-07-19 | 2026-07-20 | RHD4CZ7C02RW3000 FF, RHD4CZ6RA01RA3000, RHD4CZ7C02RW2000 FF, RHD4CZ7RA03RA2000 FF, RHD4CZ7RA03RA1000 FF, RHD4ENMSEW2000 FF, RHD4ENMSEW2010 FF, RHD4ENSDZ7APPEW100 SS, RHD4CZ6A02RW1000 FF, RHD4CZ7C02RW1000 FF |
|  | 312 | **RHD4-02-002-Road Works - RW-Z7-(ROUND-05)** |  | 2026-07-21 | 2026-07-29 |  |
| RHD4CZ7RA05RA1000 |  | Excavation works for (ROUND-05) - (B1.31 23 16.01)-Z7-RA05-RA | 3d | 2026-07-21 | 2026-07-23 | RHD4CZ7RA03RA1000, RHD4ENMSEW2000, RHD4ENMSEW2010, RHD4ENSDZ7APPEW100 SS, RHD4CZ6A02RW1000 SS, RHD4CZ7C02RW1000 |
| RHD4CZ7RA05RA2000 |  | Backfill Layers works Using Dynamic Compaction Crane (RIC) for (ROUND-05) - (B1.31 23 23.03)-Z7-RA05-RA | 3d | 2026-07-25 | 2026-07-27 | RHD4CZ7RA05RA1000 |
| RHD4CZ7RA05RA3000 |  | Backfill Layers works using Improved fill Material for (ROUND-05) - (B1.31 23 23.01)-Z7-RA05-RA | 2d | 2026-07-28 | 2026-07-29 | RHD4CZ7RA05RA2000 |
|  | 313 | **RHD4-02-002-Z8-Round Abouts** |  | 2026-01-08 | 2026-02-11 |  |
|  | 314 | **RHD4-02-002-Road Works - RW-Z8-(ROUND-04)** |  | 2026-01-08 | 2026-02-11 |  |
| RHD4CZ8RA04RA1000 |  | Excavation works for (ROUND-04) - (B1.31 23 16.01)-Z8-RA04-RA | 5d | 2026-01-08 | 2026-01-13 | RHD4CZ8A011RW1000 SS |
| RHD4CZ8RA04RA2000 |  | Backfill Layers works Using Dynamic Compaction Crane (RIC) for (ROUND-04) - (B1.31 23 23.03)-Z8-RA04-RA | 11d | 2026-01-19 | 2026-01-31 | RHD4CZ8RA04RA1000, RHD4CZ8A011RW2000 SS |
| RHD4CZ8RA04RA3000 |  | Backfill Layers works using Improved fill Material for (ROUND-04) - (B1.31 23 23.01)-Z8-RA04-RA | 10d | 2026-02-01 | 2026-02-11 | RHD4CZ8RA04RA2000, RHD4CZ8A011RW3000 SS |
|  | 4676 | **RHD4-02-002-Z6** |  | 2026-02-01 | 2027-07-12 |  |
|  | 5244 | **RHD4-02-002-Z6-C062** |  | 2026-02-01 | 2027-07-06 |  |
|  | 5275 | **RHD4-02-002-Z6-C062-Crossings Sewage Network - SWCr** |  |  |  |  |
|  | 5285 | **RHD4-02-002-C062-(SWCr)-MH Works - 1200 mm diameter** |  |  |  |  |
|  | 5286 | **RHD4-02-002-C062-(SWCr)-MH Works - 1200 mm diameter with Back drop** |  |  |  |  |
|  | 5281 | **RHD4-02-002-C062-(SWCr)-UPVC Pipes - 200 mm diameter** |  |  |  |  |
|  | 5319 | **RHD4-02-002-Z6-C062-Crossings Potable Network - PTCr** |  |  |  |  |
|  | 5321 | **RHD4-02-002-C062-(PTCr)-HDPE Pipes - 160 mm diameter** |  |  |  |  |
|  | 5320 | **RHD4-02-002-C062-(PTCr)-HDPE Pipes - 110 mm diameter** |  |  |  |  |
|  | 5325 | **RHD4-02-002-C062-(PTCr)-Gate Valves (Direct Buried)** |  |  |  |  |
|  | 5332 | **RHD4-02-002-C062-(PTCr)-Fire Hydrant** |  |  |  |  |
|  | 5366 | **RHD4-02-002-Z6-C062-Crossings Irrigation Network - IRRC** |  |  |  |  |
|  | 5367 | **RHD4-02-002-C062-(IRRC)-HDPE Pipes - 160 mm diameter** |  |  |  |  |
|  | 5375 | **RHD4-02-002-C062-(IRRC)-Gate Valves (Direct Buried)** |  |  |  |  |
|  | 5423 | **RHD4-02-002-Z6-C062-Road Works - RD** |  | 2026-09-09 | 2027-07-06 |  |
|  | 5424 | **RHD4-02-002-C062-(RD)-Subgrade** |  | 2026-09-09 | 2026-09-16 |  |
| RHD4CZ6C062RD1100 |  | Supply, lay and compaction subgrade compacted thickness 300 mm for Roads - (RD-C-6 /2)-Z6-C062-RD | 7d | 2026-09-09 | 2026-09-16 | RHD4ENSDZ6APPRD220, RHD4ENSDZ6APPEW100, RHD4CZ6C062ST3300, RHD4CZ6C062ST3302 |
|  | 5425 | **RHD4-02-002-C062-(RD)-Aggregate Base Course** |  | 2026-09-17 | 2026-09-22 |  |
| RHD4CZ6C062RD2100 |  | Supply, lay and compaction Aggregate base course compacted thickness 300 mmfor Roads - (RD-C-6 /2)-Z6-C062-RD | 5d | 2026-09-17 | 2026-09-22 | RHD4CZ6C062RD1100 |
|  | 5426 | **RHD4-02-002-C062-(RD)-Bituminous base course Two Layers, including (MC1)&(RC2)** |  | 2026-09-24 | 2027-06-26 |  |
| RHD4CZ6C062RD3100 |  | Supply, lay and Asphaltic base course including Prime Coat (MC1) for 1st Layer - (RD-C-6 /2)-Z6-C062-RD | 2d | 2026-09-24 | 2026-09-26 | RHD4CZ6C062RD2100, RHD4ENMSASPH2000, RHD4ENMSASPH2010, RHD4CZ7L03RD3100 |
| RHD4CZ6C062RD3200 |  | Supply, lay and Asphaltic base course including Tack Coat (RC2) for 2nd Layer - (RD-C-6 /2)-Z6-C062-RD | 2d | 2027-06-24 | 2027-06-26 | RHD4CZ6C062ICT2400 |
|  | 5428 | **RHD4-02-002-C062-(RD)-Precast Concrete Curb** |  | 2027-06-27 | 2027-06-29 |  |
| RHD4CZ6C062RD5100 |  | Supply and installation Precast Concrete Kerb for Roads - (RD-C-6 /2)-Z6-C062-RD | 3d | 2027-06-27 | 2027-06-29 | RHD4CZ6C062RD3200, RHD4ENMSRD2000, RHD4ENMSRD2010 |
|  | 5431 | **RHD4-02-002-C062-(RD)-Traffic Signage** |  | 2027-06-30 | 2027-07-03 |  |
| RHD4CZ6C062RD8100 |  | Installation of Traffic Signage for Road Network - (RD-C-6 /2)-Z6-C062-RD | 3d | 2027-06-30 | 2027-07-03 | RHD4CZ6C062RD5100 |
|  | 5429 | **RHD4-02-002-C062-(RD)-Precast Interlocking Block Pavers** |  |  |  |  |
|  | 5427 | **RHD4-02-002-C062-(RD)-Bituminous concrete wearing course including tack coat (RC2)** |  | 2027-06-30 | 2027-07-01 |  |
| RHD4CZ6C062RD4100 |  | Supply, lay and compaction Asphaltic wearing course including tack Coat (RC2)for Road Network - (RD-C-6 /2)-Z6-C062-RD | 2d | 2027-06-30 | 2027-07-01 | RHD4CZ6C062RD5100 |
|  | 5432 | **RHD4-02-002-C062-(RD)-Speed Table and Wheel Stopper** |  |  |  |  |
|  | 5430 | **RHD4-02-002-C062-(RD)-Pavement Marking** |  | 2027-07-04 | 2027-07-06 |  |
| RHD4CZ6C062RD7100 |  | Pavement Markings for Road Network - (RD-C-6 /2)-Z6-C062-RD | 3d | 2027-07-04 | 2027-07-06 | RHD4CZ6C062RD4100, RHD4CZ6C062RD8100 |
|  | 5248 | **RHD4-02-002-Z6-C062-Storm Network - ST** |  | 2026-07-18 | 2026-10-25 |  |
|  | 4132 | **RHD4-02-002-C062-(ST)-MH Works - 2000 mm diameter** |  | 2026-07-18 | 2026-07-28 |  |
| RHD4CZ6C062ST3102 |  | Excavation and PC Blinding works for MH 2000 mm - (RD-C-6 /2)-Z6-C062-ST | 2d | 2026-07-18 | 2026-07-19 | RHD4CZ6C062RW3000, RHD4PRSHLDOSST1000 SS |
| RHD4CZ6C062ST3202 |  | Installation of Base for MH 2000 mm - (RD-C-6 /2)-Z6-C062-ST | 2d | 2026-07-20 | 2026-07-21 | RHD4CZ6C062ST3102 |
| RHD4CZ6C062ST3302 |  | MH Ring and C.Slab works and Backfilling works for MH 2000 mm - (RD-C-6 /2)-Z6-C062-ST | 2d | 2026-07-22 | 2026-07-23 | RHD4CZ6C062ST3202 |
| RHD4CZ6C062ST3402 |  | Steel Cover for MH 2000 mm - (RD-C-6 /2)-Z6-C062-ST | 2d | 2026-07-25 | 2026-07-26 | RHD4CZ6C062ST3302 |
| RHD4CZ6C062ST3502 |  | Finishing, Benching, Testing works for MH 2000 mm - (RD-C-6 /2)-Z6-C062-ST | 2d | 2026-07-27 | 2026-07-28 | RHD4CZ6C062ST3402 |
|  | 4120 | **RHD4-02-002-C062-(ST)-GRP Pipes - 1000 mm diameter** |  | 2026-07-20 | 2026-07-30 |  |
| RHD4CZ6C062ST1106 |  | Excavation works for GRP Pipe Line 1000 mm - (RD-C-6 /2)-Z6-C062-ST | 2d | 2026-07-20 | 2026-07-21 | RHD4ENMSST2000, RHD4CZ6C062ST3102, RHD4GNPSMIS1000 SS, RHD4ENMSTUN1000, RHD4ENMSST1000 |
| RHD4CZ6C062ST1206 |  | Bedding works for GRP Pipe Line 1000 mm - (RD-C-6 /2)-Z6-C062-ST | 2d | 2026-07-22 | 2026-07-23 | RHD4CZ6C062ST1106 |

| ID | WBS | Task | Duration | Start | Finish | Predecessors |
| --- | --- | --- | --- | --- | --- | --- |
| RHD4CZ6C062ST1306 |  | Installing for GRP Pipe Line 1000 mm - (RD-C-6 /2)-Z6-C062-ST | 2d | 2026-07-25 | 2026-07-26 | RHD4CZ6C062ST1206 |
| RHD4CZ6C062ST1406 |  | Primary Test for GRP Pipe Line 1000 mm - (RD-C-6 /2)-Z6-C062-ST | 2d | 2026-07-27 | 2026-07-28 | RHD4CZ6C062ST1306 |
| RHD4CZ6C062ST1506 |  | Backfilling and warning tape works for GRP Pipe Line 1000 mm - (RD-C-6 /2)-Z6-C062-ST | 2d | 2026-07-29 | 2026-07-30 | RHD4CZ6C062ST1406 |
|  | 5266 | **RHD4-02-002-C062-(ST)-MH Works - 1500 mm diameter** |  | 2026-08-23 | 2026-10-25 |  |
| RHD4CZ6C062ST3101 |  | Excavation and PC Blinding works for MH 1500 mm - (RD-C-6 /2)-Z6-C062-ST | 3d | 2026-08-23 | 2026-08-25 | RHD4ENSDZ6APPST110, RHD4ENMSST2000, RHD4PRSHLDOSST1300 |
| RHD4CZ6C062ST3201 |  | Installation of Base for MH 1500 mm - (RD-C-6 /2)-Z6-C062-ST | 3d | 2026-08-26 | 2026-08-29 | RHD4CZ6C062ST3101, RHD4PRSHLSTAGST1605 SS |
| RHD4CZ6C062ST3301 |  | MH Ring and C.Slab works and Backfilling works for MH 1500 mm - (RD-C-6 /2)-Z6-C062-ST | 3d | 2026-08-30 | 2026-09-01 | RHD4CZ6C062ST3201, RHD4PRSHLDOSST1605 |
| RHD4CZ6C062ST3401 |  | Steel Cover for MH 1500 mm - (RD-C-6 /2)-Z6-C062-ST | 2d | 2026-10-11 | 2026-10-12 | RHD4CZ6C062ST3301, RHD4CZ6C062ST2501, RHD4CZ6C062ST1500, RHD4PRSHLDOSST1705, RHD4PRSHLSTAGST1705, RHD4CZ6C062ST3400 |
| RHD4CZ6C062ST3501 |  | Finishing, Benching, Testing works for MH 1500 mm - (RD-C-6 /2)-Z6-C062-ST | 3d | 2026-10-22 | 2026-10-25 | RHD4CZ6C062ST3401, RHD4CZ6C062ST2500, RHD4CZ6C062ST3500, RHD4CZ6C062ST3502 |
|  | 5265 | **RHD4-02-002-C062-(ST)-MH Works - 1200 mm diameter** |  | 2026-08-26 | 2026-10-21 |  |
| RHD4CZ6C062ST3100 |  | Excavation and PC Blinding works for MH 1200 mm - (RD-C-6 /2)-Z6-C062-ST | 4d | 2026-08-26 | 2026-08-30 | RHD4CZ6C062ST3101, RHD4ENSDZ6APPST110, RHD4ENMSST2000, RHD4ENMSST2010 |
| RHD4CZ6C062ST3200 |  | Installation of Base for MH 1200 mm - (RD-C-6 /2)-Z6-C062-ST | 4d | 2026-08-31 | 2026-09-03 | RHD4CZ6C062ST3100, RHD4PRSHLSTAGST1605 SS |
| RHD4CZ6C062ST3300 |  | MH Ring and C.Slab works and Backfilling works for MH 1200 mm - (RD-C-6 /2)-Z6-C062-ST | 4d | 2026-09-05 | 2026-09-08 | RHD4CZ6C062ST3200, RHD4PRSHLDOSST1605 |
| RHD4CZ6C062ST3400 |  | Steel Cover for MH 1200 mm - (RD-C-6 /2)-Z6-C062-ST | 4d | 2026-10-06 | 2026-10-10 | RHD4CZ6C062ST3300, RHD4CZ6C062ST2501, RHD4CZ6C062ST2500, RHD4CZ6C062ST1500, RHD4PRSHLDOSST1705, RHD4PRSHLSTAGST1705, RHD4CZ6C062ST7400 |
| RHD4CZ6C062ST3500 |  | Finishing, Benching, Testing works for MH 1200 mm - (RD-C-6 /2)-Z6-C062-ST | 4d | 2026-10-18 | 2026-10-21 | RHD4CZ6C062ST3400, RHD4CZ6C062ST7500, RHD4CZ6C062ST1506 |
|  | 5254 | **RHD4-02-002-C062-(ST)-GRP Pipes - 900 mm diameter** |  |  |  |  |
|  | 5253 | **RHD4-02-002-C062-(ST)-GRP Pipes - 800 mm diameter** |  | 2026-08-31 | 2026-09-10 |  |
| RHD4CZ6C062ST1104 |  | Excavation works for GRP Pipe Line 800 mm - (RD-C-6 /2)-Z6-C062-ST | 2d | 2026-08-31 | 2026-09-01 | RHD4ENSDZ6APPST110, RHD4CZ5L08ST2500, RHD4CZ6C062ST3100 |
| RHD4CZ6C062ST1204 |  | Bedding works for GRP Pipe Line 800 mm - (RD-C-6 /2)-Z6-C062-ST | 2d | 2026-09-02 | 2026-09-03 | RHD4CZ6C062ST1104 |
| RHD4CZ6C062ST1304 |  | Installing for GRP Pipe Line 800 mm - (RD-C-6 /2)-Z6-C062-ST | 2d | 2026-09-05 | 2026-09-06 | RHD4CZ6C062ST1204, RHD4PRSHLSTAGST1005 SS, RHD4CZ5L016ST2500, RHD4PRSHLDOSST1605, RHD4PRSHLPOST1000, RHD4PRSHLDOSST1005 |
| RHD4CZ6C062ST1404 |  | Primary Test for GRP Pipe Line 800 mm - (RD-C-6 /2)-Z6-C062-ST | 2d | 2026-09-07 | 2026-09-08 | RHD4CZ6C062ST1304 |
| RHD4CZ6C062ST1504 |  | Backfilling and warning tape works for GRP Pipe Line 800 mm - (RD-C-6 /2)-Z6-C062-ST | 2d | 2026-09-09 | 2026-09-10 | RHD4CZ6C062ST1404 |
|  | 5252 | **RHD4-02-002-C062-(ST)-GRP Pipes - 700 mm diameter** |  | 2026-08-31 | 2026-09-13 |  |
| RHD4CZ6C062ST1103 |  | Excavation works for GRP Pipe Line 700 mm - (RD-C-6 /2)-Z6-C062-ST | 2d | 2026-08-31 | 2026-09-01 | RHD4CZ6C062ST1104 SS, RHD4ENSDZ6APPST110 |
| RHD4CZ6C062ST1203 |  | Bedding works for GRP Pipe Line 700 mm - (RD-C-6 /2)-Z6-C062-ST | 2d | 2026-09-02 | 2026-09-03 | RHD4CZ6C062ST1103 |
| RHD4CZ6C062ST1303 |  | Installing for GRP Pipe Line 700 mm - (RD-C-6 /2)-Z6-C062-ST | 2d | 2026-09-05 | 2026-09-06 | RHD4CZ6C062ST1203, RHD4PRSHLSTAGST1005, RHD4PRSHLDOSST1605, RHD4PRSHLPOST1000, RHD4PRSHLDOSST1005 |
| RHD4CZ6C062ST1403 |  | Primary Test for GRP Pipe Line 700 mm - (RD-C-6 /2)-Z6-C062-ST | 2d | 2026-09-07 | 2026-09-08 | RHD4CZ6C062ST1303 |
| RHD4CZ6C062ST1503 |  | Backfilling and warning tape works for GRP Pipe Line 700 mm - (RD-C-6 /2)-Z6-C062-ST | 2d | 2026-09-12 | 2026-09-13 | RHD4CZ6C062ST1403, RHD4CZ6C062ST1504 |
|  | 5251 | **RHD4-02-002-C062-(ST)-GRP Pipes - 600 mm diameter** |  | 2026-08-31 | 2026-09-15 |  |
| RHD4CZ6C062ST1102 |  | Excavation works for GRP Pipe Line 600 mm - (RD-C-6 /2)-Z6-C062-ST | 2d | 2026-08-31 | 2026-09-01 | RHD4CZ6C062ST1103 SS, RHD4ENSDZ6APPST110 |
| RHD4CZ6C062ST1202 |  | Bedding works for GRP Pipe Line 600 mm - (RD-C-6 /2)-Z6-C062-ST | 2d | 2026-09-02 | 2026-09-03 | RHD4CZ6C062ST1102 |
| RHD4CZ6C062ST1302 |  | Installing for GRP Pipe Line 600 mm - (RD-C-6 /2)-Z6-C062-ST | 2d | 2026-09-05 | 2026-09-06 | RHD4CZ6C062ST1202, RHD4PRSHLSTAGST1005, RHD4PRSHLDOSST1605, RHD4PRSHLPOST1000, RHD4PRSHLDOSST1005 |
| RHD4CZ6C062ST1402 |  | Primary Test for GRP Pipe Line 600 mm - (RD-C-6 /2)-Z6-C062-ST | 2d | 2026-09-07 | 2026-09-08 | RHD4CZ6C062ST1302 |
| RHD4CZ6C062ST1502 |  | Backfilling and warning tape works for GRP Pipe Line 600 mm - (RD-C-6 /2)-Z6-C062-ST | 2d | 2026-09-14 | 2026-09-15 | RHD4CZ6C062ST1402, RHD4CZ6C062ST1503 |
|  | 5250 | **RHD4-02-002-C062-(ST)-GRP Pipes - 500 mm diameter** |  | 2026-08-31 | 2026-09-17 |  |
| RHD4CZ6C062ST1101 |  | Excavation works for GRP Pipe Line 500 mm - (RD-C-6 /2)-Z6-C062-ST | 2d | 2026-08-31 | 2026-09-01 | RHD4CZ6C062ST1102 SS, RHD4ENSDZ6APPST110 |
| RHD4CZ6C062ST1201 |  | Bedding works for GRP Pipe Line 500 mm - (RD-C-6 /2)-Z6-C062-ST | 2d | 2026-09-02 | 2026-09-03 | RHD4CZ6C062ST1101 |
| RHD4CZ6C062ST1301 |  | Installing for GRP Pipe Line 500 mm - (RD-C-6 /2)-Z6-C062-ST | 2d | 2026-09-05 | 2026-09-06 | RHD4CZ6C062ST1201, RHD4PRSHLSTAGST1005, RHD4PRSHLDOSST1605, RHD4PRSHLPOST1000, RHD4PRSHLDOSST1005 |
| RHD4CZ6C062ST1401 |  | Primary Test for GRP Pipe Line 500 mm - (RD-C-6 /2)-Z6-C062-ST | 2d | 2026-09-07 | 2026-09-08 | RHD4CZ6C062ST1301 |
| RHD4CZ6C062ST1501 |  | Backfilling and warning tape works for GRP Pipe Line 500 mm - (RD-C-6 /2)-Z6-C062-ST | 2d | 2026-09-16 | 2026-09-17 | RHD4CZ6C062ST1401, RHD4CZ6C062ST1502 |
|  | 5249 | **RHD4-02-002-C062-(ST)-GRP Pipes - 400 mm diameter** |  | 2026-08-31 | 2026-09-20 |  |
| RHD4CZ6C062ST1100 |  | Excavation works for GRP Pipe Line 400 mm - (RD-C-6 /2)-Z6-C062-ST | 2d | 2026-08-31 | 2026-09-01 | RHD4CZ6C062ST1101 SS, RHD4ENSDZ6APPST110 |
| RHD4CZ6C062ST1200 |  | Bedding works for GRP Pipe Line 400 mm - (RD-C-6 /2)-Z6-C062-ST | 2d | 2026-09-02 | 2026-09-03 | RHD4CZ6C062ST1100 |
| RHD4CZ6C062ST1300 |  | Installing for GRP Pipe Line 400 mm - (RD-C-6 /2)-Z6-C062-ST | 2d | 2026-09-05 | 2026-09-06 | RHD4CZ6C062ST1200, RHD4PRSHLSTAGST1005, RHD4PRSHLDOSST1605, RHD4PRSHLPOST1000, RHD4PRSHLDOSST1005 |
| RHD4CZ6C062ST1400 |  | Primary Test for GRP Pipe Line 400 mm - (RD-C-6 /2)-Z6-C062-ST | 2d | 2026-09-07 | 2026-09-08 | RHD4CZ6C062ST1300 |
| RHD4CZ6C062ST1500 |  | Backfilling and warning tape works for GRP Pipe Line 400 mm - (RD-C-6 /2)-Z6-C062-ST | 2d | 2026-09-19 | 2026-09-20 | RHD4CZ6C062ST1400, RHD4CZ6C062ST1501 |
|  | 5272 | **RHD4-02-002-Z6-C062-Catch Basin - ST** |  | 2026-09-02 | 2026-10-17 |  |
|  | 5273 | **RHD4-02-002-C062-(ST)-Single Catch Basin Works** |  | 2026-09-02 | 2026-10-17 |  |
| RHD4CZ6C062ST7100 |  | Excavation works for Single Catch Basin - (RD-C-6 /2)-Z6-C062-ST | 6d | 2026-09-02 | 2026-09-08 | RHD4ENSDZ6APPST110, RHD4CZ6C062RW3000, RHD4CZ6C062ST1100 |
| RHD4CZ6C062ST7200 |  | PC Blinding, Installation and Pipe connection for Single Catch Basin - (RD-C-6 /2)-Z6-C062-ST | 6d | 2026-09-09 | 2026-09-15 | RHD4CZ6C062ST7100 |
| RHD4CZ6C062ST7300 |  | Rings & C.Slab & Final Backfill for Single Catch Basin - (RD-C-6 /2)-Z6-C062-ST | 8d | 2026-09-16 | 2026-09-26 | RHD4CZ6C062ST7200, RHD4PRSHLDOSST1305, RHD4PRSHLSTAGST1305 SS |
| RHD4CZ6C062ST7400 |  | Steel Cover for Single Catch Basin - (RD-C-6 /2)-Z6-C062-ST | 6d | 2026-09-27 | 2026-10-03 | RHD4CZ6C062ST7300, RHD4PRSHLDOSST1705, RHD4CZ6C062ST8400 |
| RHD4CZ6C062ST7500 |  | Finishing and Insulation works for Single Catch Basin - (RD-C-6 /2)-Z6-C062-ST | 12d | 2026-10-04 | 2026-10-17 | RHD4CZ6C062ST7400, RHD4CZ6C062ST8500 |
|  | 5274 | **RHD4-02-002-C062-(ST)-Double Catch Basin Works** |  | 2026-09-09 | 2026-09-20 |  |
| RHD4CZ6C062ST8100 |  | Excavation works for Double Catch Basin - (RD-C-6 /2)-Z6-C062-ST | 2d | 2026-09-09 | 2026-09-10 | RHD4CZ6C062ST7100, RHD4ENSDZ6APPST110 |
| RHD4CZ6C062ST8200 |  | PC Blinding, Installation and Pipe connection for Double Catch Basin - (RD-C-6 /2)-Z6-C062-ST | 2d | 2026-09-12 | 2026-09-13 | RHD4CZ6C062ST8100 |
| RHD4CZ6C062ST8300 |  | Rings & C.Slab & Final Backfillfor Double Catch Basin - (RD-C-6 /2)-Z6-C062-ST | 2d | 2026-09-14 | 2026-09-15 | RHD4CZ6C062ST8200, RHD4PRSHLDOSST1305, RHD4PRSHLSTAGST1305 |
| RHD4CZ6C062ST8400 |  | Steel Cover for Double Catch Basin - (RD-C-6 /2)-Z6-C062-ST | 2d | 2026-09-16 | 2026-09-17 | RHD4CZ6C062ST8300, RHD4PRSHLDOSST1705 |
| RHD4CZ6C062ST8500 |  | Finishing and Insulation works for Double Catch Basin - (RD-C-6 /2)-Z6-C062-ST | 2d | 2026-09-19 | 2026-09-20 | RHD4CZ6C062ST8400 |
|  | 5264 | **RHD4-02-002-C062-(ST)-UPVC Pipes - 400 mm diameter** |  | 2026-09-09 | 2026-09-28 |  |
| RHD4CZ6C062ST2101 |  | Excavation works for UPVC Pipe Line 400 mm - (RD-C-6 /2)-Z6-C062-ST | 2d | 2026-09-09 | 2026-09-10 | RHD4ENSDZ6APPST110, RHD4CZ6C062ST7100 |
| RHD4CZ6C062ST2201 |  | Bedding works for UPVC Pipe Line 400 mm - (RD-C-6 /2)-Z6-C062-ST | 2d | 2026-09-12 | 2026-09-13 | RHD4CZ6C062ST2101 |
| RHD4CZ6C062ST2301 |  | Installing for UPVC Pipe Line 400 mm - (RD-C-6 /2)-Z6-C062-ST | 2d | 2026-09-14 | 2026-09-15 | RHD4CZ6C062ST2201, RHD4PRSHLDOSST1105, RHD4PRSHLSTAGST1105 SS |
| RHD4CZ6C062ST2401 |  | Primary Test for UPVC Pipe Line 400 mm - (RD-C-6 /2)-Z6-C062-ST | 2d | 2026-09-16 | 2026-09-17 | RHD4CZ6C062ST2301 |
| RHD4CZ6C062ST2501 |  | Backfilling and warning tape works for UPVC Pipe Line 400 mm - (RD-C-6 /2)-Z6-C062-ST | 2d | 2026-09-27 | 2026-09-28 | RHD4CZ6C062ST2401, RHD4CZ6C062ST6100 |
|  | 5263 | **RHD4-02-002-C062-(ST)-UPVC Pipes - 300 mm diameter** |  | 2026-09-12 | 2026-10-05 |  |
| RHD4CZ6C062ST2100 |  | Excavation works for UPVC Pipe Line 300 mm - (RD-C-6 /2)-Z6-C062-ST | 4d | 2026-09-12 | 2026-09-15 | RHD4CZ6C062ST2101, RHD4ENSDZ6APPST110 |
| RHD4CZ6C062ST2200 |  | Bedding works for UPVC Pipe Line 300 mm - (RD-C-6 /2)-Z6-C062-ST | 4d | 2026-09-16 | 2026-09-20 | RHD4CZ6C062ST2100 |
| RHD4CZ6C062ST2300 |  | Installing for UPVC Pipe Line 300 mm - (RD-C-6 /2)-Z6-C062-ST | 4d | 2026-09-21 | 2026-09-26 | RHD4CZ6C062ST2200, RHD4CZ6C062ST2301, RHD4PRSHLDOSST1105, RHD4PRSHLSTAGST1105 |
| RHD4CZ6C062ST2400 |  | Primary Test for UPVC Pipe Line 300 mm - (RD-C-6 /2)-Z6-C062-ST | 3d | 2026-09-27 | 2026-09-29 | RHD4CZ6C062ST2300 |

| ID | WBS | Task | Duration | Start | Finish | Predecessors |
| --- | --- | --- | --- | --- | --- | --- |
| RHD4CZ6C062ST2500 |  | Backfilling and warning tape works for UPVC Pipe Line 300 mm - (RD-C-6 /2)-Z6-C062-ST | 5d | 2026-09-30 | 2026-10-05 | RHD4CZ6C062ST2400, RHD4CZ6C062ST6100, RHD4CZ6C062ST2501 |
|  | 5271 | **RHD4-02-002-C062-(ST)-Concrete Encasement** |  | 2026-09-24 | 2026-09-26 |  |
| RHD4CZ6C062ST6100 |  | Pipe Encasement for Storm Pipelines - (RD-C-6 /2)-Z6-C062-ST | 2d | 2026-09-24 | 2026-09-26 | RHD4CZ6C062ST2301 SS, RHD4CZ6C062ST2300 SS, RHD4CZ6C062ST2300 FF, RHD4CZ6C062ST2301 FF, RHD4CZ6C062ST2201, RHD4CZ6C062ST2200 |
|  | 4299 | **RHD4-02-002-Z6-C062-Concrete Box Culvert - ST** |  | 2026-02-01 | 2026-05-12 |  |
|  | 4300 | **RHD4-02-002-C062-(ST)-Concrete Box Culvert** |  | 2026-02-01 | 2026-05-12 |  |
| RHD4CZ6C062ST4100 |  | Excavation works for Box Culvert - (RD-C-6/2)-Z6-C062-ST(Completed) | 46d | 2026-02-01 | 2026-03-29 | RHD4CZ8RA04RA2000 |
| RHD4CZ6C062ST4200 |  | PC works for Box Culvert - (RD-C-6/2)-Z6-C062-ST(Completed) | 43d | 2026-02-01 | 2026-03-25 | RHD4CZ6C062ST4100 SS |
| RHD4CZ6C062ST4400 |  | Raft works for Box Culvert - (RD-C-6/2)-Z6-C062-ST(Completed) | 21d | 2026-02-01 | 2026-02-25 | RHD4CZ6C062ST4200 SS |
| RHD4CZ6C062ST4500 |  | Wall and slab works for Box Culvert - (RD-C-6/2)-Z6-C062-ST | 7d | 2026-03-30 | 2026-04-06 | RHD4CZ6C062ST4400, RHD4CZ6C062ST4200, RHD4CZ8RA04RA2000, RHD4CZ6C062ST4100 |
| RHD4CZ6C062ST4600 |  | Insulation and Testing for Box Culvert - (RD-C-6/2)-Z6-C062-ST | 6d | 2026-04-26 | 2026-05-02 | RHD4CZ6C062ST5400 |
| RHD4CZ6C062ST4700 |  | Backfilling works for Box Culvert - (RD-C-6/2)-Z6-C062-ST | 9d | 2026-05-03 | 2026-05-12 | RHD4CZ6C062ST4500, RHD4CZ6C062ST5300, RHD4CZ6C062ST4600 |
|  | 4301 | **RHD4-02-002-C062-(ST)-Concrete Chambers** |  | 2026-04-07 | 2026-04-25 |  |
| RHD4CZ6C062ST5100 |  | Excavation and Bedding for Concrete Chambers - for Box Culvert - (RD-C-6/2)-Z6-C062-ST | 4d | 2026-04-07 | 2026-04-11 | RHD4CZ6C062ST4500 |
| RHD4CZ6C062ST5200 |  | PC works for Concrete Chambers - for Box Culvert - (RD-C-6/2)-Z6-C062-ST | 4d | 2026-04-12 | 2026-04-15 | RHD4CZ6C062ST5100 |
| RHD4CZ6C062ST5300 |  | Installation for Concrete Chambers - for Box Culvert - (RD-C-6/2)-Z6-C062-ST | 4d | 2026-04-16 | 2026-04-20 | RHD4CZ6C062ST5200 |
| RHD4CZ6C062ST5400 |  | Backfilling works for Concrete Chambers - for Box Culvert - (RD-C-6/2)-Z6-C062-ST | 4d | 2026-04-21 | 2026-04-25 | RHD4CZ6C062ST5300 |
|  | 5297 | **RHD4-02-002-Z6-C062-Sewage Network - SW** |  | 2026-10-22 | 2026-12-15 |  |
|  | 4551 | **RHD4-02-002-C062-(SW)-MH Works - 1200 mm diameter with Back drop** |  | 2026-10-22 | 2026-11-02 |  |
| RHD4CZ6C062SW3101 |  | Excavation and PC Blinding works for MH 1200 mm - (RD-C-6 /2)-Z6-C062-SW | 2d | 2026-10-22 | 2026-10-24 | RHD4CZ6C062ST1500, RHD4CZ6C062ST3500 |
| RHD4CZ6C062SW3201 |  | Installation of Base for MH 1200 mm - (RD-C-6 /2)-Z6-C062-SW | 2d | 2026-10-25 | 2026-10-26 | RHD4CZ6C062SW3101 |
| RHD4CZ6C062SW3301 |  | MH Ring and C.Slab works and Backfilling works for MH 1200 mm - (RD-C-6 /2)-Z6-C062-SW | 2d | 2026-10-27 | 2026-10-28 | RHD4CZ6C062SW3201 |
| RHD4CZ6C062SW3401 |  | Steel Cover for MH 1200 mm - (RD-C-6 /2)-Z6-C062-SW | 2d | 2026-10-29 | 2026-10-31 | RHD4CZ6C062ST4700, RHD4CZ6C062SW3301 |
| RHD4CZ6C062SW3501 |  | Finishing, Benching, Testing works for MH 1200 mm - (RD-C-6 /2)-Z6-C062-SW | 2d | 2026-11-01 | 2026-11-02 | RHD4CZ6C062SW3401 |
|  | 5307 | **RHD4-02-002-C062-(SW)-MH Works - 1200 mm diameter** |  | 2026-10-31 | 2026-12-15 |  |
| RHD4CZ6C062SW3100 |  | Excavation and PC Blinding works for MH 1200 mm - (RD-C-6 /2)-Z6-C062-SW | 6d | 2026-10-31 | 2026-11-05 | RHD4ENSDZ6APPSW120, RHD4CZ6C062SW3101, RHD4CZ9L06MV1200 |
| RHD4CZ6C062SW3200 |  | Installation of Base for MH 1200 mm - (RD-C-6 /2)-Z6-C062-SW | 10d | 2026-11-07 | 2026-11-17 | RHD4CZ6C062SW3100 |
| RHD4CZ6C062SW3300 |  | MH Ring and C.Slab works and Backfilling works for MH 1200 mm - (RD-C-6 /2)-Z6-C062-SW | 10d | 2026-11-18 | 2026-11-29 | RHD4CZ6C062SW3200, RHD4PRSHLDOSSW1305, RHD4PRSHLSTAGSW1305 |
| RHD4CZ6C062SW3400 |  | Steel Cover for MH 1200 mm - (RD-C-6 /2)-Z6-C062-SW | 4d | 2026-11-30 | 2026-12-03 | RHD4CZ6C062SW3300, RHD4PRSHLDOSSW1405, RHD4PRSHLSTAGSW1405 |
| RHD4CZ6C062SW3500 |  | Finishing, Benching, Testing works for MH 1200 mm - (RD-C-6 /2)-Z6-C062-SW | 10d | 2026-12-05 | 2026-12-15 | RHD4CZ6C062SW3400, RHD4CZ6C062SW3501 |
|  | 5303 | **RHD4-02-002-C062-(SW)-UPVC Pipes - 200 mm diameter** |  | 2026-11-07 | 2026-11-28 |  |
| RHD4CZ6C062SW2100 |  | Excavation works for UPVC Pipe Line 200 mm - (RD-C-6 /2)-Z6-C062-SW | 4d | 2026-11-07 | 2026-11-10 | RHD4ENSDZ6APPSW120, RHD4CZ6C062SW3101, RHD4CZ6C062SW3100, RHD4CZ5L016SW5201, RHD4CZ5L08ST4600 |
| RHD4CZ6C062SW2200 |  | Bedding works for UPVC Pipe Line 200 mm - (RD-C-6 /2)-Z6-C062-SW | 4d | 2026-11-11 | 2026-11-15 | RHD4CZ6C062SW2100 |
| RHD4CZ6C062SW2300 |  | Installing for UPVC Pipe Line 200 mm - (RD-C-6 /2)-Z6-C062-SW | 4d | 2026-11-16 | 2026-11-19 | RHD4CZ6C062SW2200, RHD4PRSHLSTAGSW1005, RHD4PRSHLDOSSW1305, RHD4PRSHLPOSW1000, RHD4PRSHLDOSSW1005, RHD4PRSHLDOSSW1004, RHD4PRSHLDOSSW1304, RHD4PRSHLPOSW1100, RHD4PRSHLDOSSW1104 |
| RHD4CZ6C062SW2400 |  | Primary Test for UPVC Pipe Line 200 mm - (RD-C-6 /2)-Z6-C062-SW | 3d | 2026-11-21 | 2026-11-23 | RHD4CZ6C062SW2300 |
| RHD4CZ6C062SW2500 |  | Backfilling and warning tape works for UPVC Pipe Line 200 mm - (RD-C-6 /2)-Z6-C062-SW | 4d | 2026-11-24 | 2026-11-28 | RHD4CZ6C062SW2400 |
|  | 5306 | **RHD4-02-002-C062-(SW)-Concrete Encasement** |  |  |  |  |
|  | 5334 | **RHD4-02-002-Z6-C062-Potable Network - PT** |  | 2026-11-29 | 2026-12-30 |  |
|  | 5335 | **RHD4-02-002-C062-(PT)-HDPE Pipes - 110 mm diameter** |  | 2026-11-29 | 2026-12-09 |  |
| RHD4CZ6C062PT1100 |  | Excavation works for HDPE Pipline 110 mm - (RD-C-6 /2)-Z6-C062-PT | 2d | 2026-11-29 | 2026-11-30 | RHD4ENSDZ6APPPT130, RHD4ENMSPT2000, RHD4CZ6C062SW2500, RHD4ENMSEW2000, RHD4ENMSEW2010 |
| RHD4CZ6C062PT1200 |  | Bedding works for HDPE Pipline 110 mm - (RD-C-6 /2)-Z6-C062-PT | 2d | 2026-12-01 | 2026-12-02 | RHD4CZ6C062PT1100 |
| RHD4CZ6C062PT1300 |  | Installing for HDPE Pipline 110 mm - (RD-C-6 /2)-Z6-C062-PT | 2d | 2026-12-03 | 2026-12-05 | RHD4CZ6C062PT1200 |
| RHD4CZ6C062PT1400 |  | Primary Test for HDPE Pipline 110 mm - (RD-C-6 /2)-Z6-C062-PT | 2d | 2026-12-06 | 2026-12-07 | RHD4CZ6C062PT1300 |
| RHD4CZ6C062PT1500 |  | Backfilling and warning tape works for HDPE Pipline 110 mm - (RD-C-6 /2)-Z6-C062-PT | 2d | 2026-12-08 | 2026-12-09 | RHD4CZ6C062PT1400 |
|  | 5336 | **RHD4-02-002-C062-(PT)-HDPE Pipes - 160 mm diameter** |  | 2026-11-29 | 2026-12-17 |  |
| RHD4CZ6C062PT1101 |  | Excavation works for HDPE Pipline 160 mm - (RD-C-6 /2)-Z6-C062-PT | 3d | 2026-11-29 | 2026-12-01 | RHD4CZ6C062SW2500, RHD4ENSDZ6APPPT130, RHD4ENMSPT2000 |
| RHD4CZ6C062PT1201 |  | Bedding works for HDPE Pipline 160 mm - (RD-C-6 /2)-Z6-C062-PT | 3d | 2026-12-02 | 2026-12-05 | RHD4CZ6C062PT1101, RHD4CZ5L08PT3203 |
| RHD4CZ6C062PT1301 |  | Installing for HDPE Pipline 160 mm - (RD-C-6 /2)-Z6-C062-PT | 5d | 2026-12-06 | 2026-12-10 | RHD4CZ6C062PT1201 |
| RHD4CZ6C062PT1401 |  | Primary Test for HDPE Pipline 160 mm - (RD-C-6 /2)-Z6-C062-PT | 2d | 2026-12-12 | 2026-12-13 | RHD4CZ6C062PT1301 |
| RHD4CZ6C062PT1501 |  | Backfilling and warning tape works for HDPE Pipline 160 mm - (RD-C-6 /2)-Z6-C062-PT | 4d | 2026-12-14 | 2026-12-17 | RHD4CZ6C062PT1401, RHD4CZ6C062PT5100 |
|  | 5340 | **RHD4-02-002-C062-(PT)-Gate Valves (Direct Buried)** |  | 2026-12-09 | 2026-12-13 |  |
| RHD4CZ6C062PT3100 |  | Installation for Direct Buried Gate Valves - (RD-C-6 /2)-Z6-C062-PT | 2d | 2026-12-09 | 2026-12-10 | RHD4CZ6C062PT1301 FF, RHD4CZ6C062PT1300 FF, RHD4CZ6C062PT1301 SS, RHD4CZ6C062PT1300 SS |
| RHD4CZ6C062PT3200 |  | Stem and Service box for Direct Buried Gate Valves - (RD-C-6 /2)-Z6-C062-PT | 2d | 2026-12-12 | 2026-12-13 | RHD4CZ6C062PT3100 |
|  | 5347 | **RHD4-02-002-C062-(PT)-Fire Hydrant** |  | 2026-12-19 | 2026-12-30 |  |
| RHD4CZ6C062PT4100 |  | Excavation and Bedding and Pipe Installation for Fire Hydrant - (RD-C-6 /2)-Z6-C062-PT | 3d | 2026-12-19 | 2026-12-21 | RHD4CZ6C062PT1501, RHD4CZ6C062PT1500, RHD4ENSDZ6APPPT130, RHD4CZ4A013LV2400, RHD4CZ2C082PT4500 |
| RHD4CZ6C062PT4200 |  | Valve Installation for Fire Hydrant - (RD-C-6 /2)-Z6-C062-PT | 2d | 2026-12-22 | 2026-12-23 | RHD4CZ6C062PT4100, RHD4CZ6C062PT3200 |
| RHD4CZ6C062PT4300 |  | Stem for Fire Hydrant - (RD-C-6 /2)-Z6-C062-PT | 2d | 2026-12-24 | 2026-12-26 | RHD4CZ6C062PT4200 |
| RHD4CZ6C062PT4400 |  | Fire Installation for Fire Hydrant - (RD-C-6 /2)-Z6-C062-PT | 2d | 2026-12-27 | 2026-12-28 | RHD4CZ6C062PT4300 |
| RHD4CZ6C062PT4500 |  | Protection Barriers for Fire Hydrant - (RD-C-6 /2)-Z6-C062-PT | 2d | 2026-12-29 | 2026-12-30 | RHD4CZ6C062PT4400, RHD4CZ4A013ST2500, RHD4CZ4L09PT2401 |
|  | 5348 | **RHD4-02-002-C062-(PT)-Concrete Encasement** |  | 2026-12-07 | 2026-12-10 |  |
| RHD4CZ6C062PT5100 |  | Pipe Encasement for Potable Pipelines - (RD-C-6 /2)-Z6-C062-PT | 4d | 2026-12-07 | 2026-12-10 | RHD4CZ6C062PT1301 FF, RHD4CZ6C062PT1300 FF, RHD4CZ6C062PT1301 SS, RHD4CZ6C062PT1300 SS, RHD4CZ6C062PT1200, RHD4CZ6C062PT1201 |
|  | 5349 | **RHD4-02-002-Z6-C062-Irrigation Network - IRR** |  | 2026-12-31 | 2027-02-08 |  |
|  | 5350 | **RHD4-02-002-C062-(IRR)-HDPE Pipes - 160 mm diameter** |  | 2026-12-31 | 2027-01-27 |  |
| RHD4CZ6C062IRR1100 |  | Excavation works for HDPE Pipline 160 mm - (RD-C-6 /2)-Z6-C062-IRR | 6d | 2026-12-31 | 2027-01-06 | RHD4CZ6C062PT1101 SS, RHD4ENSDZ6APPIRR140, RHD4ENMSRR2000, RHD4CZ6C062PT4500 |
| RHD4CZ6C062IRR1200 |  | Bedding works for HDPE Pipline 160 mm - (RD-C-6 /2)-Z6-C062-IRR | 5d | 2027-01-07 | 2027-01-12 | RHD4CZ6C062IRR1100 |
| RHD4CZ6C062IRR1300 |  | Installing for HDPE Pipline 160 mm - (RD-C-6 /2)-Z6-C062-IRR | 6d | 2027-01-13 | 2027-01-19 | RHD4CZ6C062IRR1200, RHD4CZ9L05SL2400 |
| RHD4CZ6C062IRR1400 |  | Primary Test for HDPE Pipline 160 mm - (RD-C-6 /2)-Z6-C062-IRR | 2d | 2027-01-20 | 2027-01-21 | RHD4CZ6C062IRR1300 |
| RHD4CZ6C062IRR1500 |  | Backfilling and warning tape works for HDPE Pipline 160 mm - (RD-C-6 /2)-Z6-C062-IRR | 5d | 2027-01-23 | 2027-01-27 | RHD4CZ6C062IRR1400, RHD4CZ4L09IRR1500 |
|  | 5362 | **RHD4-02-002-C062-(IRR)-Wash out Valves** |  |  |  |  |
|  | 5363 | **RHD4-02-002-C062-(IRR)-Air Valve Chamber** |  | 2027-01-28 | 2027-02-06 |  |
| RHD4CZ6C062IRR2102 |  | Excavation and Bedding for Valve Chamber for Irrigation Network - (RD-C-6 /2)-Z6-C062-IRR | 2d | 2027-01-28 | 2027-01-30 | RHD4CZ6C062IRR1500, RHD4ENSDZ6APPIRR140 |

| ID | WBS | Task | Duration | Start | Finish | Predecessors |
| --- | --- | --- | --- | --- | --- | --- |
| RHD4CZ6C062IRR2202 |  | PC works for Valve Chamber for Irrigation Network - (RD-C-6 /2)-Z6-C062-IRR | 2d | 2027-01-31 | 2027-02-01 | RHD4CZ6C062IRR2102 |
| RHD4CZ6C062IRR2302 |  | Installation for Valve Chamber for Irrigation Network - (RD-C-6 /2)-Z6-C062-IRR | 2d | 2027-02-02 | 2027-02-03 | RHD4CZ6C062IRR2202 |
| RHD4CZ6C062IRR2402 |  | Backfilling works for Valve Chamber for Irrigation Network - (RD-C-6 /2)-Z6-C062-IRR | 2d | 2027-02-04 | 2027-02-06 | RHD4CZ6C062IRR2302 |
|  | 5364 | **RHD4-02-002-C062-(IRR)-Air Valves** |  | 2027-02-04 | 2027-02-08 |  |
| RHD4CZ6C062IRR3103 |  | Installation for Air Valves for Irrigation Network - (RD-C-6 /2)-Z6-C062-IRR | 2d | 2027-02-04 | 2027-02-06 | RHD4CZ6C062IRR2302 |
| RHD4CZ6C062IRR3203 |  | Stem and Service box for Air Valves for Irrigation Network - (RD-C-6 /2)-Z6-C062-IRR | 2d | 2027-02-07 | 2027-02-08 | RHD4CZ6C062IRR3103, RHD4CZ6C062IRR2402 |
|  | 5365 | **RHD4-02-002-C062-(IRR)-Concrete Encasement** |  |  |  |  |
|  | 6115 | **RHD4-02-002-C062-(IRR)-Gate Valves (Direct Buried)** |  | 2026-12-31 | 2027-01-04 |  |
| RHD4CZ6C062IRR3100 |  | Installation for Direct Buried Gate Valves - (RD-C-6 /2)-Z6-C062-IRR | 2d | 2026-12-31 | 2027-01-02 | RHD4CZ6C062IRR1100 SS |
| RHD4CZ6C062IRR3200 |  | Stem and Service box for Direct Buried Gate Valves - (RD-C-6 /2)-Z6-C062-IRR | 2d | 2027-01-03 | 2027-01-04 | RHD4CZ6C062IRR3100 |
|  | 5361 | **RHD4-02-002-C062-(IRR)-Wash out Chamber** |  |  |  |  |
|  | 5383 | **RHD4-02-002-Z6-C062-Medium Voltage Network - MV** |  | 2026-09-27 | 2026-11-05 |  |
|  | 5384 | **RHD4-02-002-C062-(MV)-Medium Voltage cable trench** |  | 2026-10-04 | 2026-10-21 |  |
| RHD4CZ6C062MV1100 |  | Excavation for Medium Voltage Trench - (RD-C-6 /2)-Z6-C062-MV | 8d | 2026-10-04 | 2026-10-12 | RHD4ENSDZ6APPMV150, RHD4CZ6C062RD3100, RHD4CZ6C062ST7400 |
| RHD4CZ6C062MV1200 |  | Trench Backfilling for Medium Voltage Network - (RD-C-6 /2)-Z6-C062-MV | 8d | 2026-10-13 | 2026-10-21 | RHD4CZ6C062MV1100 |
|  | 5385 | **RHD4-02-002-C062-(MV)-Medium Voltage duct banks** |  | 2026-09-27 | 2026-10-05 |  |
| RHD4CZ6C062MV2100 |  | Excavation of Duct Banks for Medium Voltage Network - (RD-C-6 /2)-Z6-C062-MV | 2d | 2026-09-27 | 2026-09-28 | RHD4CZ6C062RW3000, RHD4CZ6C062RD3100 |
| RHD4CZ6C062MV2200 |  | Installation of Duct Banks for Medium Voltage Network - (RD-C-6 /2)-Z6-C062-MV | 2d | 2026-09-29 | 2026-09-30 | RHD4CZ6C062MV2100 |
| RHD4CZ6C062MV2300 |  | Pouring of Duct Banks for Medium Voltage Network - (RD-C-6 /2)-Z6-C062-MV | 2d | 2026-10-01 | 2026-10-03 | RHD4CZ6C062MV2200 |
| RHD4CZ6C062MV2400 |  | Backfilling of Duct Banks for Medium Voltage Network - (RD-C-6 /2)-Z6-C062-MV | 2d | 2026-10-04 | 2026-10-05 | RHD4CZ6C062MV2300 |
|  | 5386 | **RHD4-02-002-C062-(MV)-Medium Voltage cables 3Cx 500 mm²** |  | 2026-10-13 | 2026-11-05 |  |
| RHD4CZ6C062MV3100 |  | Installation of Medium Voltage Cables 3Cx 500 mm² - (RD-C-6 /2)-Z6-C062-MV | 8d | 2026-10-13 | 2026-10-21 | RHD4CZ6C062MV1100, RHD4ENMSMV2000, RHD4ENMSMV2010 |
| RHD4CZ6C062MV3200 |  | Joints Installation of Medium Voltage Cables 3Cx 500 mm² - (RD-C-6 /2)-Z6-C062-MV | 3d | 2026-10-22 | 2026-10-25 | RHD4CZ6C062MV3100 |
| RHD4CZ6C062MV3300 |  | Testing of Medium Voltage Cables 3Cx 500 mm² - (RD-C-6 /2)-Z6-C062-MV | 8d | 2026-10-26 | 2026-11-03 | RHD4CZ6C062MV3200, RHD4CZ6C062MV1200 |
| RHD4CZ6C062MV3400 |  | Termination of Medium Voltage Cables 3Cx 500 mm² - (RD-C-6 /2)-Z6-C062-MV | 2d | 2026-11-04 | 2026-11-05 | RHD4CZ6C062MV3300 |
|  | 5387 | **RHD4-02-002-C062-(MV)-Medium Voltage cables 3Cx 50 mm²** |  | 2026-11-04 | 2026-11-05 |  |
| RHD4CZ6C062MV3401 |  | Termination of Medium Voltage Cables 3Cx 50 mm² - (RD-C-6 /2)-Z6-C062-MV | 2d | 2026-11-04 | 2026-11-05 | RHD4CZ6C062MV3400 SS, RHD4CZ6C062MV3300 |
|  | 5388 | **RHD4-02-002-C062-(MV)-Normally open Point (Outdoor Type)** |  |  |  |  |
|  | 5390 | **RHD4-02-002-Z6-C062-Low Voltage Network - LV** |  | 2027-01-28 | 2027-02-18 |  |
|  | 5391 | **RHD4-02-002-C062-(LV)-Low Voltage duct banks** |  | 2027-01-28 | 2027-02-07 |  |
| RHD4CZ6C062LV2100 |  | Excavation of Duct Banks for Low Voltage Network - (RD-C-6 /2)-Z6-C062-LV | 2d | 2027-01-28 | 2027-01-30 | RHD4CZ6C062RW3000, RHD4ENSDZ6APPLV160, RHD4CZ6C062MV2100 SS, RHD4CZ6C062IRR1500, RHD4CZ7A012ST7500 |
| RHD4CZ6C062LV2200 |  | Installation of Duct Banks for Low Voltage Network - (RD-C-6 /2)-Z6-C062-LV | 3d | 2027-01-31 | 2027-02-02 | RHD4CZ6C062LV2100 |
| RHD4CZ6C062LV2300 |  | Pouring of Duct Banks for Low Voltage Network - (RD-C-6 /2)-Z6-C062-LV | 2d | 2027-02-03 | 2027-02-04 | RHD4CZ6C062LV2200 |
| RHD4CZ6C062LV2400 |  | Backfilling of Duct Banks for Low Voltage Network - (RD-C-6 /2)-Z6-C062-LV | 2d | 2027-02-06 | 2027-02-07 | RHD4CZ6C062LV2300 |
|  | 5392 | **RHD4-02-002-C062-(LV)-Low Voltage Drawpit** |  | 2027-02-06 | 2027-02-09 |  |
| RHD4CZ6C062LV5100 |  | Excavation of Drawpit size 900x900x1000mm for Low Voltage Network - (RD-C-6 /2)-Z6-C062-LV | 2d | 2027-02-06 | 2027-02-07 | RHD4CZ6C062LV2300, RHD4ENSDZ6APPLV160 |
| RHD4CZ6C062LV5200 |  | Installation of Drawpit size 900x900x1000mm for Low Voltage Network - (RD-C-6 /2)-Z6-C062-LV | 2d | 2027-02-08 | 2027-02-09 | RHD4CZ6C062LV5100, RHD4PRSHLDOSLV1400, RHD4PRSHLSTAGLV1400 |
|  | 5393 | **RHD4-02-002-C062-(LV)-Low Voltage cables** |  | 2027-02-10 | 2027-02-18 |  |
| RHD4CZ6C062LV3100 |  | Excavation for Low Voltage Cables for Low Voltage Network - (RD-C-6 /2)-Z6-C062-LV | 2d | 2027-02-10 | 2027-02-11 | RHD4CZ6C062LV2400, RHD4ENSDZ6APPLV160, RHD4CZ6C062LV5200 |
| RHD4CZ6C062LV3200 |  | Cable Laying of Low Voltage Cables for Low Voltage Network - (RD-C-6 /2)-Z6-C062-LV | 2d | 2027-02-13 | 2027-02-14 | RHD4CZ6C062LV3100, RHD4ENMSLV2000, RHD4ENMSLV2010 |
| RHD4CZ6C062LV3300 |  | Warning tape and Backfill for Low Voltage Cables for Low Voltage Network - (RD-C-6 /2)-Z6-C062-LV | 2d | 2027-02-15 | 2027-02-16 | RHD4CZ6C062LV3200 |
| RHD4CZ6C062LV3400 |  | Testing of Low Voltage Cables for Low Voltage Network - (RD-C-6 /2)-Z6-C062-LV | 2d | 2027-02-17 | 2027-02-18 | RHD4CZ6C062LV3300 |
|  | 4259 | **RHD4-02-002-C062-(LV)-Low Voltage Distribution Pillars** |  |  |  |  |
|  | 5396 | **RHD4-02-002-Z6-C062-Street Lighting Network - SL** |  | 2027-02-20 | 2027-03-25 |  |
|  | 5399 | **RHD4-02-002-C062-(SL)-Street Lighting cables** |  | 2027-02-20 | 2027-03-04 |  |
| RHD4CZ6C062SL3100 |  | Excavation for Street Lighting Cables for Street Lighting Network - (RD-C-6 /2)-Z6-C062-SL | 3d | 2027-02-20 | 2027-02-23 | RHD4ENSDZ6APPSL170, RHD4CZ6C062LV3400 |
| RHD4CZ6C062SL3200 |  | Cable Laying of Street Lighting Cables for Street Lighting Network - (RD-C-6 /2)-Z6-C062-SL | 3d | 2027-02-24 | 2027-02-27 | RHD4CZ6C062SL3100, RHD4PRSHLDOSSL1100, RHD4ENMSSL2000, RHD4ENMSSL2010, RHD4PRSHLSTAGSL1100 |
| RHD4CZ6C062SL3300 |  | Warning tape and Backfill for Street Lighting Cables for Street Lighting Network - (RD-C-6 /2)-Z6-C062-SL | 3d | 2027-02-28 | 2027-03-02 | RHD4CZ6C062SL3200 |
| RHD4CZ6C062SL3400 |  | Testing of Street Lighting Cables for Street Lighting Network - (RD-C-6 /2)-Z6-C062-SL | 2d | 2027-03-03 | 2027-03-04 | RHD4CZ6C062SL3300 |
|  | 5400 | **RHD4-02-002-C062-(SL)-Street Lighting Poles** |  | 2027-03-06 | 2027-03-25 |  |
| RHD4CZ6C062SL1100 |  | Excavation for RC Base for Lighting Poles for Street Lighting Network - (RD-C-6 /2)-Z6-C062-SL | 2d | 2027-03-06 | 2027-03-07 | RHD4ENSDZ6APPSL170, RHD4CZ6C062SL3400 |
| RHD4CZ6C062SL1200 |  | Installation for RC Base for Lighting Poles for Street Lighting Network - (RD-C-6 /2)-Z6-C062-SL | 2d | 2027-03-08 | 2027-03-13 | RHD4CZ6C062SL1100 |
| RHD4CZ6C062SL1300 |  | Backfill for RC Base for Lighting Poles for Street Lighting Network - (RD-C-6 /2)-Z6-C062-SL | 2d | 2027-03-14 | 2027-03-15 | RHD4CZ6C062SL1200 |
| RHD4CZ6C062SL1400 |  | Installation for Lighting Poles for Street Lighting Network - (RD-C-6 /2)-Z6-C062-SL | 3d | 2027-03-16 | 2027-03-18 | RHD4CZ6C062SL1300, RHD4PRSHLDOSSL1200, RHD4ENMSSL2000, RHD4ENMSSL2010, RHD4CZ6C062LV3400 |
| RHD4CZ6C062SL1500 |  | Luminaire Installation for Lighting Poles for Street Lighting Network - (RD-C-6 /2)-Z6-C062-SL | 4d | 2027-03-22 | 2027-03-25 | RHD4CZ6C062SL1400, RHD4CZ6C062SL6100 |
|  | 5402 | **RHD4-02-002-C062-(SL)-Street Lighting Earthing System** |  | 2027-03-20 | 2027-03-21 |  |
| RHD4CZ6C062SL6100 |  | Installation of Earthing for Lighting Poles and Fedder Pillers for Street Lighting Network - (RD-C-6 /2)-Z6-C062-SL | 2d | 2027-03-20 | 2027-03-21 | RHD4CZ6C062SL1400, RHD4ENMSER2000, RHD4ENMSER2010 |
|  | 5408 | **RHD4-02-002-Z6-C062-Telecommunications Network - TC** |  | 2027-01-28 | 2027-05-09 |  |
|  | 5409 | **RHD4-02-002-C062-(TC)-Telecommunications Ducts** |  | 2027-03-27 | 2027-05-09 |  |
| RHD4CZ6C062TC2100 |  | Excavation of HDPE Ducts for Telecom Network - (RD-C-6 /2)-Z6-C062-TC | 11d | 2027-03-27 | 2027-04-07 | RHD4ENSDZ6APPTC190, RHD4CZ6C062SL1500 |
| RHD4CZ6C062TC2200 |  | Installation of HDPE Ducts for Telecom Network - (RD-C-6 /2)-Z6-C062-TC | 16d | 2027-04-08 | 2027-04-26 | RHD4CZ6C062TC2100 |
| RHD4CZ6C062TC2400 |  | Backfilling of HDPE Ducts for Telecom Network - (RD-C-6 /2)-Z6-C062-TC | 11d | 2027-04-27 | 2027-05-09 | RHD4CZ6C062TC2200, RHD4CZ6C062TC5200 |
|  | 5410 | **RHD4-02-002-C062-(TC)-Telecommunications Manholes** |  | 2027-04-08 | 2027-04-17 |  |
| RHD4CZ6C062TC5100 |  | Excavation for Manholes for Telecom Network - (RD-C-6 /2)-Z6-C062-TC | 4d | 2027-04-08 | 2027-04-12 | RHD4CZ6C062TC2100, RHD4ENSDZ6APPTC190 |
| RHD4CZ6C062TC5200 |  | Installation of Manholes for Telecom Network - (RD-C-6 /2)-Z6-C062-TC | 4d | 2027-04-13 | 2027-04-17 | RHD4CZ6C062TC5100, RHD4CZ6C062TC2200 SS |
|  | 5411 | **RHD4-02-002-C062-(TC)-Telecomminications Road Crossings** |  | 2027-01-28 | 2027-02-06 |  |
| RHD4CZ6C062TC3100 |  | Excavation for Road Crossings for Telecom Network - (RD-C-6 /2)-Z6-C062-TC | 2d | 2027-01-28 | 2027-01-30 | RHD4ENSDZ6APPTC190, RHD4CZ6C062LV2100 SS |
| RHD4CZ6C062TC3200 |  | Installation of Road Crossings for Telecom Network - (RD-C-6 /2)-Z6-C062-TC | 2d | 2027-01-31 | 2027-02-01 | RHD4CZ6C062TC3100, RHD4PRSHLDOSTC1100, RHD4PRSHLSTAGTC1100 |
| RHD4CZ6C062TC3300 |  | Pouring of Road Crossings for Telecom Network - (RD-C-6 /2)-Z6-C062-TC | 2d | 2027-02-02 | 2027-02-03 | RHD4CZ6C062TC3200 |
| RHD4CZ6C062TC3400 |  | Backfilling of Road Crossings for Telecom Network - (RD-C-6 /2)-Z6-C062-TC | 2d | 2027-02-04 | 2027-02-06 | RHD4CZ6C062TC3300, RHD4CZ9C071PT3203 |

| ID | WBS | Task | Duration | Start | Finish | Predecessors |
| --- | --- | --- | --- | --- | --- | --- |
|  | 5412 | **RHD4-02-002-Z6-C062-Information and Communication Technologies - ICT** |  | 2027-01-28 | 2027-06-23 |  |
|  | 5413 | **RHD4-02-002-C062-(ICT)-Information and Communication Technologies Ducts** |  | 2027-05-10 | 2027-06-23 |  |
| RHD4CZ6C062ICT2100 |  | Excavation of HDPE Ducts for ICT Network - (RD-C-6 /2)-Z6-C062-ICT | 10d | 2027-05-10 | 2027-05-25 | RHD4ENSDZ6APPICT200, RHD4CZ6C062TC3100 SS, RHD4CZ6C062TC2400 |
| RHD4CZ6C062ICT2200 |  | Installation of HDPE Ducts for ICT Network - (RD-C-6 /2)-Z6-C062-ICT | 15d | 2027-05-26 | 2027-06-12 | RHD4CZ6C062ICT2100 |
| RHD4CZ6C062ICT2400 |  | Backfilling of HDPE Ducts for ICT Network - (RD-C-6 /2)-Z6-C062-ICT | 10d | 2027-06-13 | 2027-06-23 | RHD4CZ6C062ICT2200, RHD4CZ6C062ICT5200 |
|  | 5414 | **RHD4-02-002-C062-(ICT)-Information and Communication Technologies Manholes** |  | 2027-05-26 | 2027-06-03 |  |
| RHD4CZ6C062ICT5100 |  | Excavation for Manholes for ICT Network - (RD-C-6 /2)-Z6-C062-ICT | 4d | 2027-05-26 | 2027-05-30 | RHD4CZ6C062ICT2100, RHD4ENSDZ6APPICT200 |
| RHD4CZ6C062ICT5200 |  | Installation of Manholes for ICT Network - (RD-C-6 /2)-Z6-C062-ICT | 4d | 2027-05-31 | 2027-06-03 | RHD4CZ6C062ICT5100, RHD4PRSHLDOSICT1200, RHD4PRSHLSTAGICT1200 |
|  | 5415 | **RHD4-02-002-C062-(ICT)-Information and Communication Technologies Road Crossings** |  | 2027-01-28 | 2027-02-08 |  |
| RHD4CZ6C062ICT3100 |  | Excavation for Road Crossings for ICT Network - (RD-C-6 /2)-Z6-C062-ICT | 2d | 2027-01-28 | 2027-01-30 | RHD4CZ6C062TC3100 SS, RHD4ENSDZ6APPICT200 |
| RHD4CZ6C062ICT3200 |  | Installation of Road Crossings for ICT Network - (RD-C-6 /2)-Z6-C062-ICT | 2d | 2027-02-02 | 2027-02-03 | RHD4CZ6C062ICT3100, RHD4CZ6C062TC3200, RHD4PRSHLDOSICT1100, RHD4PRSHLSTAGICT1100 |
| RHD4CZ6C062ICT3300 |  | Pouring of Road Crossings for ICT Network - (RD-C-6 /2)-Z6-C062-ICT | 2d | 2027-02-04 | 2027-02-06 | RHD4CZ6C062ICT3200, RHD4CZ6C062TC3300 |
| RHD4CZ6C062ICT3400 |  | Backfilling of Road Crossings for ICT Network - (RD-C-6 /2)-Z6-C062-ICT | 2d | 2027-02-07 | 2027-02-08 | RHD4CZ6C062ICT3300, RHD4CZ6C062TC3400 |
|  | 5403 | **RHD4-02-002-Z6-C062-Landscape Network - LS** |  |  |  |  |
|  | 5404 | **RHD4-02-002-C062-(LS)-Landscape Lighting cables** |  |  |  |  |
|  | 5406 | **RHD4-02-002-C062-(LS)-Landscape Bollard Poles** |  |  |  |  |
|  | 5416 | **RHD4-02-002-Z6-C062-Security Network - CCTV** |  |  |  |  |
|  | 5417 | **RHD4-02-002-C062-(CCTV)-Civil Works** |  |  |  |  |
|  | 4851 | **RHD4-02-002-C062-(CCTV)-CCTV Poles** |  |  |  |  |
|  | 4852 | **RHD4-02-002-C062-(CCTV)-Camera** |  |  |  |  |
|  | 4853 | **RHD4-02-002-C062-(CCTV)-Power and Infrastructure** |  |  |  |  |
|  | 4855 | **RHD4-02-002-C062-(CCTV)-CCTV Panels and Components** |  |  |  |  |
|  | 4677 | **RHD4-02-002-Z6-A015** |  | 2026-05-19 | 2027-07-12 |  |
|  | 4752 | **RHD4-02-002-Z6-A015-Crossings Potable Network - PTCr** |  |  |  |  |
|  | 4755 | **RHD4-02-002-A015-(PTCr)-HDPE Pipes - 200 mm diameter** |  |  |  |  |
|  | 4765 | **RHD4-02-002-A015-(PTCr)-Fire Hydrant** |  |  |  |  |
|  | 4799 | **RHD4-02-002-Z6-A015-Crossings Irrigation Network - IRRC** |  |  |  |  |
|  | 4800 | **RHD4-02-002-A015-(IRRC)-HDPE Pipes - 160 mm diameter** |  |  |  |  |
|  | 4856 | **RHD4-02-002-Z6-A015-Road Works - RD** |  | 2026-08-24 | 2027-07-12 |  |
|  | 4857 | **RHD4-02-002-A015-(RD)-Subgrade** |  | 2026-08-24 | 2026-08-27 |  |
| RHD4CZ6A015RD1100 |  | Supply, lay and compaction subgrade compacted thickness 300 mm for Roads - (RD-A-1 /5)-Z6-A015-RD | 4d | 2026-08-24 | 2026-08-27 | RHD4ENSDZ6APPRD220, RHD4ENSDZ6APPEW100 SS, RHD4CZ6A015ST3301, RHD4CZ6A015ST1503, RHD4CZ6A015TC3400, RHD4CZ6A015ICT3400 |
|  | 4858 | **RHD4-02-002-A015-(RD)-Aggregate Base Course** |  | 2026-08-29 | 2026-09-01 |  |
| RHD4CZ6A015RD2100 |  | Supply, lay and compaction Aggregate base course compacted thickness 300 mmfor Roads - (RD-A-1 /5)-Z6-A015-RD | 4d | 2026-08-29 | 2026-09-01 | RHD4PRSHLDOSRD1000, RHD4PRSHLSTAGRD1000, RHD4CZ6A015RD1100 |
|  | 4859 | **RHD4-02-002-A015-(RD)-Bituminous base course Two Layers, including (MC1)&(RC2)** |  | 2026-09-02 | 2027-06-22 |  |
| RHD4CZ6A015RD3100 |  | Supply, lay and Asphaltic base course including Prime Coat (MC1) for 1st Layer - (RD-A-1 /5)-Z6-A015-RD | 4d | 2026-09-02 | 2026-09-06 | RHD4CZ6A015RD2100, RHD4PRSHLDOSRD1100, RHD4ENMSASPH2000, RHD4ENMSASPH2010, RHD4PRSHLSTAGRD1100 |
| RHD4CZ6A015RD3200 |  | Supply, lay and Asphaltic base course including Tack Coat (RC2) for 2nd Layer - (RD-A-1 /5)-Z6-A015-RD | 4d | 2027-06-19 | 2027-06-22 | RHD4PRSHLDOSRD1100, RHD4PRSHLSTAGRD1100, RHD4CZ6A015CCTV6100 |
|  | 4861 | **RHD4-02-002-A015-(RD)-Precast Concrete Curb** |  | 2027-06-23 | 2027-06-30 |  |
| RHD4CZ6A015RD5100 |  | Supply and installation Precast Concrete Kerb for Roads - (RD-A-1 /5)-Z6-A015-RD | 7d | 2027-06-23 | 2027-06-30 | RHD4CZ6A015RD3200, RHD4PRSHLDOSRD1200, RHD4ENMSRD2000, RHD4ENMSRD2010, RHD4PRSHLSTAGRD1200 |
|  | 4864 | **RHD4-02-002-A015-(RD)-Traffic Signage** |  | 2027-07-01 | 2027-07-07 |  |
| RHD4CZ6A015RD8100 |  | Installation of Traffic Signage for Road Network - (RD-A-1 /5)-Z6-A015-RD | 6d | 2027-07-01 | 2027-07-07 | RHD4CZ6A015RD5100 |
|  | 4862 | **RHD4-02-002-A015-(RD)-Precast Interlocking Block Pavers** |  |  |  |  |
|  | 4860 | **RHD4-02-002-A015-(RD)-Bituminous concrete wearing course including tack coat (RC2)** |  | 2027-07-01 | 2027-07-03 |  |
| RHD4CZ6A015RD4100 |  | Supply, lay and compaction Asphaltic wearing course including tack Coat (RC2)for Road Network - (RD-A-1 /5)-Z6-A015-RD | 2d | 2027-07-01 | 2027-07-03 | RHD4CZ6A015RD5100 |
|  | 4863 | **RHD4-02-002-A015-(RD)-Pavement Marking** |  | 2027-07-08 | 2027-07-12 |  |
| RHD4CZ6A015RD7100 |  | Pavement Markings for Road Network - (RD-A-1 /5)-Z6-A015-RD | 4d | 2027-07-08 | 2027-07-12 | RHD4CZ6A015RD4100, RHD4CZ6A015RD8100 |
|  | 4681 | **RHD4-02-002-Z6-A015-Storm Network - ST** |  | 2026-05-19 | 2026-11-08 |  |
|  | 4699 | **RHD4-02-002-A015-(ST)-MH Works - 1500 mm diameter** |  | 2026-05-19 | 2026-07-12 |  |
| RHD4CZ6A015ST3101 |  | Excavation and PC Blinding works for MH 1500 mm - (RD-A-1 /5)-Z6-A015-ST | 2d | 2026-05-19 | 2026-05-20 | RHD4ENSDZ6APPST110, RHD4ENMSST2000, RHD4CZ6C062RW3000, RHD4PRSHLDOSST1307 |
| RHD4CZ6A015ST3201 |  | Installation of Base for MH 1500 mm - (RD-A-1 /5)-Z6-A015-ST | 2d | 2026-05-21 | 2026-05-23 | RHD4CZ6A015ST3101, RHD4PRSHLSTAGST1605 |
| RHD4CZ6A015ST3301 |  | MH Ring and C.Slab works and Backfilling works for MH 1500 mm - (RD-A-1 /5)-Z6-A015-ST | 2d | 2026-05-24 | 2026-05-25 | RHD4CZ6A015ST3201, RHD4PRSHLDOSST1605 |
| RHD4CZ6A015ST3401 |  | Steel Cover for MH 1500 mm - (RD-A-1 /5)-Z6-A015-ST | 2d | 2026-07-04 | 2026-07-05 | RHD4CZ6A015ST3301, RHD4CZ6A015ST1500, RHD4PRSHLDOSST1705, RHD4PRSHLSTAGST1705 |
| RHD4CZ6A015ST3501 |  | Finishing, Benching, Testing works for MH 1500 mm - (RD-A-1 /5)-Z6-A015-ST | 2d | 2026-07-11 | 2026-07-12 | RHD4CZ6A015ST3401, RHD4CZ6A015ST2500 |
|  | 4698 | **RHD4-02-002-A015-(ST)-MH Works - 1200 mm diameter** |  | 2026-05-21 | 2026-11-08 |  |
| RHD4CZ6A015ST3100 |  | Excavation and PC Blinding works for MH 1200 mm - (RD-A-1 /5)-Z6-A015-ST | 5d | 2026-05-21 | 2026-05-30 | RHD4CZ6A015ST3101, RHD4ENSDZ6APPST110, RHD4ENMSST2000, RHD4ENMSST2010 |
| RHD4CZ6A015ST3200 |  | Installation of Base for MH 1200 mm - (RD-A-1 /5)-Z6-A015-ST | 5d | 2026-05-31 | 2026-06-04 | RHD4CZ6A015ST3100, RHD4PRSHLSTAGST1605 |
| RHD4CZ6A015ST3300 |  | MH Ring and C.Slab works and Backfilling works for MH 1200 mm - (RD-A-1 /5)-Z6-A015-ST | 5d | 2026-06-06 | 2026-06-10 | RHD4CZ6A015ST3200, RHD4PRSHLDOSST1605 |
| RHD4CZ6A015ST3400 |  | Steel Cover for MH 1200 mm - (RD-A-1 /5)-Z6-A015-ST | 5d | 2026-10-28 | 2026-11-02 | RHD4CZ6A015ST3300, RHD4CZ6A015ST2500, RHD4CZ6A015ST1500, RHD4PRSHLDOSST1705, RHD4PRSHLSTAGST1705, RHD4CZ6A015PT4300 |
| RHD4CZ6A015ST3500 |  | Finishing, Benching, Testing works for MH 1200 mm - (RD-A-1 /5)-Z6-A015-ST | 5d | 2026-11-03 | 2026-11-08 | RHD4CZ6A015ST3400, RHD4CZ6A015ST3501 |
|  | 4685 | **RHD4-02-002-A015-(ST)-GRP Pipes - 700 mm diameter** |  | 2026-06-06 | 2026-06-17 |  |
| RHD4CZ6A015ST1103 |  | Excavation works for GRP Pipe Line 700 mm - (RD-A-1 /5)-Z6-A015-ST | 2d | 2026-06-06 | 2026-06-07 | RHD4CZ6A015ST3201, RHD4CZ6A015ST3200, RHD4ENSDZ6APPST110 |
| RHD4CZ6A015ST1203 |  | Bedding works for GRP Pipe Line 700 mm - (RD-A-1 /5)-Z6-A015-ST | 2d | 2026-06-08 | 2026-06-09 | RHD4CZ6A015ST1103 |
| RHD4CZ6A015ST1303 |  | Installing for GRP Pipe Line 700 mm - (RD-A-1 /5)-Z6-A015-ST | 2d | 2026-06-11 | 2026-06-13 | RHD4CZ6A015ST1203, RHD4CZ6A015ST3301, RHD4CZ6A015ST3300, RHD4PRSHLSTAGST1005, RHD4PRSHLDOSST1605, RHD4PRSHLPOST1000, RHD4PRSHLDOSST1005 |
| RHD4CZ6A015ST1403 |  | Primary Test for GRP Pipe Line 700 mm - (RD-A-1 /5)-Z6-A015-ST | 2d | 2026-06-14 | 2026-06-15 | RHD4CZ6A015ST1303 |
| RHD4CZ6A015ST1503 |  | Backfilling and warning tape works for GRP Pipe Line 700 mm - (RD-A-1 /5)-Z6-A015-ST | 2d | 2026-06-16 | 2026-06-17 | RHD4CZ6A015ST1403 |
|  | 4684 | **RHD4-02-002-A015-(ST)-GRP Pipes - 600 mm diameter** |  | 2026-06-08 | 2026-06-20 |  |
| RHD4CZ6A015ST1102 |  | Excavation works for GRP Pipe Line 600 mm - (RD-A-1 /5)-Z6-A015-ST | 2d | 2026-06-08 | 2026-06-09 | RHD4CZ6A015ST1103, RHD4ENSDZ6APPST110 |
| RHD4CZ6A015ST1202 |  | Bedding works for GRP Pipe Line 600 mm - (RD-A-1 /5)-Z6-A015-ST | 2d | 2026-06-10 | 2026-06-11 | RHD4CZ6A015ST1102 |
| RHD4CZ6A015ST1302 |  | Installing for GRP Pipe Line 600 mm - (RD-A-1 /5)-Z6-A015-ST | 2d | 2026-06-14 | 2026-06-15 | RHD4CZ6A015ST1202, RHD4CZ6A015ST1303, RHD4PRSHLSTAGST1005, RHD4PRSHLDOSST1605, RHD4PRSHLPOST1000, RHD4PRSHLDOSST1005 |
| RHD4CZ6A015ST1402 |  | Primary Test for GRP Pipe Line 600 mm - (RD-A-1 /5)-Z6-A015-ST | 2d | 2026-06-16 | 2026-06-17 | RHD4CZ6A015ST1302 |
| RHD4CZ6A015ST1502 |  | Backfilling and warning tape works for GRP Pipe Line 600 mm - (RD-A-1 /5)-Z6-A015-ST | 2d | 2026-06-18 | 2026-06-20 | RHD4CZ6A015ST1402, RHD4CZ6A015ST1503 |

| ID | WBS | Task | Duration | Start | Finish | Predecessors |
| --- | --- | --- | --- | --- | --- | --- |
|  | 4683 | **RHD4-02-002-A015-(ST)-GRP Pipes - 500 mm diameter** |  | 2026-06-10 | 2026-06-22 |  |
| RHD4CZ6A015ST1101 |  | Excavation works for GRP Pipe Line 500 mm - (RD-A-1 /5)-Z6-A015-ST | 2d | 2026-06-10 | 2026-06-11 | RHD4CZ6A015ST1102, RHD4ENSDZ6APPST110 |
| RHD4CZ6A015ST1201 |  | Bedding works for GRP Pipe Line 500 mm - (RD-A-1 /5)-Z6-A015-ST | 2d | 2026-06-13 | 2026-06-14 | RHD4CZ6A015ST1101 |
| RHD4CZ6A015ST1301 |  | Installing for GRP Pipe Line 500 mm - (RD-A-1 /5)-Z6-A015-ST | 2d | 2026-06-16 | 2026-06-17 | RHD4CZ6A015ST1201, RHD4CZ6A015ST1302, RHD4PRSHLSTAGST1005, RHD4PRSHLDOSST1605, RHD4PRSHLPOST1000, RHD4PRSHLDOSST1005 |
| RHD4CZ6A015ST1401 |  | Primary Test for GRP Pipe Line 500 mm - (RD-A-1 /5)-Z6-A015-ST | 2d | 2026-06-18 | 2026-06-20 | RHD4CZ6A015ST1301 |
| RHD4CZ6A015ST1501 |  | Backfilling and warning tape works for GRP Pipe Line 500 mm - (RD-A-1 /5)-Z6-A015-ST | 2d | 2026-06-21 | 2026-06-22 | RHD4CZ6A015ST1401, RHD4CZ6A015ST1502 |
|  | 4682 | **RHD4-02-002-A015-(ST)-GRP Pipes - 400 mm diameter** |  | 2026-06-13 | 2026-07-02 |  |
| RHD4CZ6A015ST1100 |  | Excavation works for GRP Pipe Line 400 mm - (RD-A-1 /5)-Z6-A015-ST | 4d | 2026-06-13 | 2026-06-16 | RHD4CZ6A015ST1101, RHD4ENSDZ6APPST110 |
| RHD4CZ6A015ST1200 |  | Bedding works for GRP Pipe Line 400 mm - (RD-A-1 /5)-Z6-A015-ST | 3d | 2026-06-17 | 2026-06-20 | RHD4CZ6A015ST1100 |
| RHD4CZ6A015ST1300 |  | Installing for GRP Pipe Line 400 mm - (RD-A-1 /5)-Z6-A015-ST | 5d | 2026-06-21 | 2026-06-25 | RHD4CZ6A015ST1200, RHD4CZ6A015ST1301, RHD4PRSHLSTAGST1005, RHD4PRSHLDOSST1605, RHD4PRSHLPOST1000, RHD4PRSHLDOSST1005 |
| RHD4CZ6A015ST1400 |  | Primary Test for GRP Pipe Line 400 mm - (RD-A-1 /5)-Z6-A015-ST | 2d | 2026-06-27 | 2026-06-28 | RHD4CZ6A015ST1300 |
| RHD4CZ6A015ST1500 |  | Backfilling and warning tape works for GRP Pipe Line 400 mm - (RD-A-1 /5)-Z6-A015-ST | 4d | 2026-06-29 | 2026-07-02 | RHD4CZ6A015ST1400 |
|  | 4697 | **RHD4-02-002-A015-(ST)-UPVC Pipes - 400 mm diameter** |  |  |  |  |
|  | 4696 | **RHD4-02-002-A015-(ST)-UPVC Pipes - 300 mm diameter** |  | 2026-06-23 | 2026-07-09 |  |
| RHD4CZ6A015ST2100 |  | Excavation works for UPVC Pipe Line 300 mm - (RD-A-1 /5)-Z6-A015-ST | 3d | 2026-06-23 | 2026-06-25 | RHD4CZ6A015ST3300, RHD4CZ6A015ST3301, RHD4ENSDZ6APPST110, RHD4CZ6A015ST1501 |
| RHD4CZ6A015ST2200 |  | Bedding works for UPVC Pipe Line 300 mm - (RD-A-1 /5)-Z6-A015-ST | 3d | 2026-06-27 | 2026-06-29 | RHD4CZ6A015ST2100 |
| RHD4CZ6A015ST2300 |  | Installing for UPVC Pipe Line 300 mm - (RD-A-1 /5)-Z6-A015-ST | 3d | 2026-06-30 | 2026-07-02 | RHD4CZ6A015ST2200, RHD4PRSHLDOSST1105, RHD4PRSHLSTAGST1105 |
| RHD4CZ6A015ST2400 |  | Primary Test for UPVC Pipe Line 300 mm - (RD-A-1 /5)-Z6-A015-ST | 2d | 2026-07-04 | 2026-07-05 | RHD4CZ6A015ST2300 |
| RHD4CZ6A015ST2500 |  | Backfilling and warning tape works for UPVC Pipe Line 300 mm - (RD-A-1 /5)-Z6-A015-ST | 4d | 2026-07-06 | 2026-07-09 | RHD4CZ6A015ST2400, RHD4CZ6A015ST6100 |
|  | 4704 | **RHD4-02-002-A015-(ST)-Concrete Encasement** |  | 2026-07-01 | 2026-07-02 |  |
| RHD4CZ6A015ST6100 |  | Pipe Encasement for Storm Pipelines - (RD-A-1 /5)-Z6-A015-ST | 2d | 2026-07-01 | 2026-07-02 | RHD4CZ6A015ST2300 SS, RHD4CZ6A015ST2300 FF, RHD4CZ6A015ST2200 |
|  | 4705 | **RHD4-02-002-Z6-A015-Catch Basin - ST** |  | 2026-06-11 | 2026-11-22 |  |
|  | 4706 | **RHD4-02-002-A015-(ST)-Single Catch Basin Works** |  | 2026-06-11 | 2026-11-22 |  |
| RHD4CZ6A015ST7100 |  | Excavation works for Single Catch Basin - (RD-A-1 /5)-Z6-A015-ST | 3d | 2026-06-11 | 2026-06-14 | RHD4CZ6A015ST3300, RHD4CZ6A015ST3301, RHD4ENSDZ6APPST110 |
| RHD4CZ6A015ST7200 |  | PC Blinding, Installation and Pipe connection for Single Catch Basin - (RD-A-1 /5)-Z6-A015-ST | 3d | 2026-06-15 | 2026-06-17 | RHD4CZ6A015ST7100 |
| RHD4CZ6A015ST7300 |  | Rings & C.Slab & Final Backfill for Single Catch Basin - (RD-A-1 /5)-Z6-A015-ST | 4d | 2026-06-18 | 2026-06-22 | RHD4CZ6A015ST7200, RHD4PRSHLDOSST1305, RHD4PRSHLSTAGST1305 |
| RHD4CZ6A015ST7400 |  | Steel Cover for Single Catch Basin - (RD-A-1 /5)-Z6-A015-ST | 3d | 2026-11-12 | 2026-11-15 | RHD4CZ6A015ST7300, RHD4PRSHLDOSST1705, RHD4CZ6A015IRR2202 |
| RHD4CZ6A015ST7500 |  | Finishing and Insulation works for Single Catch Basin - (RD-A-1 /5)-Z6-A015-ST | 6d | 2026-11-16 | 2026-11-22 | RHD4CZ6A015ST7400, RHD4CZ6C062MV3401 |
|  | 4707 | **RHD4-02-002-A015-(ST)-Double Catch Basin Works** |  |  |  |  |
|  | 4299 | **RHD4-02-002-Z6-A015-Concrete Box Culvert - ST** |  | 2026-07-04 | 2026-08-19 |  |
|  | 4300 | **RHD4-02-002-A015-(ST)-Concrete Box Culvert** |  | 2026-07-04 | 2026-08-19 |  |
| RHD4CZ6A015ST4100 |  | Excavation works for Box Culvert - (RD-A-1/5)-Z6-A015-ST(Completed) | 7d | 2026-07-04 | 2026-07-11 | RHD4CZ6A015ST1500 |
| RHD4CZ6A015ST4200 |  | PC works for Box Culvert - (RD-A-1/5)-Z6-A015-ST(Completed) | 7d | 2026-07-12 | 2026-07-19 | RHD4CZ6A015ST4100 |
| RHD4CZ6A015ST4400 |  | Raft works for Box Culvert - (RD-A-1/5)-Z6-A015-ST(Completed) | 15d | 2026-07-12 | 2026-07-28 | RHD4CZ6A015ST4200 SS |
| RHD4CZ6A015ST4500 |  | Wall and slab works for Box Culvert - (RD-A-1/5)-Z6-A015-ST | 6d | 2026-07-29 | 2026-08-04 | RHD4CZ6A015ST4400, RHD4CZ6A015ST4200, RHD4CZ6A015ST4100 |
| RHD4CZ6A015ST4700 |  | Backfilling works for Box Culvert - (RD-A-1/5)-Z6-A015-ST | 2d | 2026-08-12 | 2026-08-13 | RHD4CZ6A015ST4500, RHD4CZ6A015ST5300 |
| RHD4CZ6A015ST4600 |  | Insulation and Testing for Box Culvert - (RD-A-1/5)-Z6-A015-ST | 5d | 2026-08-15 | 2026-08-19 | RHD4CZ6A015ST4700, RHD4CZ6A015ST5400 |
|  | 4301 | **RHD4-02-002-A015-(ST)-Concrete Chambers** |  | 2026-08-05 | 2026-08-13 |  |
| RHD4CZ6A015ST5100 |  | Excavation and Bedding for Concrete Chambers - for Box Culvert - (RD-A-1/5)-Z6-A015-ST | 2d | 2026-08-05 | 2026-08-06 | RHD4CZ6A015ST4500 |
| RHD4CZ6A015ST5200 |  | PC works for Concrete Chambers - for Box Culvert - (RD-A-1/5)-Z6-A015-ST | 2d | 2026-08-08 | 2026-08-09 | RHD4CZ6A015ST5100 |
| RHD4CZ6A015ST5300 |  | Installation for Concrete Chambers - for Box Culvert - (RD-A-1/5)-Z6-A015-ST | 2d | 2026-08-10 | 2026-08-11 | RHD4CZ6A015ST5200 |
| RHD4CZ6A015ST5400 |  | Backfilling works for Concrete Chambers - for Box Culvert - (RD-A-1/5)-Z6-A015-ST | 2d | 2026-08-12 | 2026-08-13 | RHD4CZ6A015ST5300 |
|  | 4767 | **RHD4-02-002-Z6-A015-Potable Network - PT** |  | 2026-07-11 | 2026-11-01 |  |
|  | 1745 | **RHD4-02-002-C011-(PT)-HDPE Pipes - 450 mm diameter** |  | 2026-07-11 | 2026-07-30 |  |
| RHD4CZ6A015PT1104 |  | Excavation works for HDPE Pipline 450 mm - (RD-A-1 /5)-Z6-A015-PT | 4d | 2026-07-11 | 2026-07-14 | RHD4CZ6A015ST2500 |
| RHD4CZ6A015PT1204 |  | Bedding works for HDPE Pipline 450 mm - (RD-A-1 /5)-Z6-A015-PT | 3d | 2026-07-15 | 2026-07-18 | RHD4CZ6A015PT1104 |
| RHD4CZ6A015PT1304 |  | Installing for HDPE Pipline 450 mm - (RD-A-1 /5)-Z6-A015-PT | 5d | 2026-07-19 | 2026-07-23 | RHD4CZ6A015PT1204 |
| RHD4CZ6A015PT1404 |  | Primary Test for HDPE Pipline 450 mm - (RD-A-1 /5)-Z6-A015-PT | 2d | 2026-07-25 | 2026-07-26 | RHD4CZ6A015PT1304 |
| RHD4CZ6A015PT1504 |  | Backfilling and warning tape works for HDPE Pipline 450 mm - (RD-A-1 /5)-Z6-A015-PT | 4d | 2026-07-27 | 2026-07-30 | RHD4CZ6A015PT1404 |
|  | 4770 | **RHD4-02-002-A015-(PT)-HDPE Pipes - 200 mm diameter** |  | 2026-10-05 | 2026-10-20 |  |
| RHD4CZ6A015PT1102 |  | Excavation works for HDPE Pipline 200 mm - (RD-A-1 /5)-Z6-A015-PT | 3d | 2026-10-05 | 2026-10-07 | RHD4ENSDZ6APPPT130, RHD4ENMSPT2000, RHD4CZ6A015ST1500, RHD4ENMSEW2000, RHD4ENMSEW2010, RHD4ENSDZ6APPEW100 SS, RHD4CZ6B17EX1001 |
| RHD4CZ6A015PT1202 |  | Bedding works for HDPE Pipline 200 mm - (RD-A-1 /5)-Z6-A015-PT | 2d | 2026-10-08 | 2026-10-10 | RHD4CZ6A015PT1102 |
| RHD4CZ6A015PT1302 |  | Installing for HDPE Pipline 200 mm - (RD-A-1 /5)-Z6-A015-PT | 4d | 2026-10-11 | 2026-10-14 | RHD4CZ6A015PT1202, RHD4PRSHLDOSPT1000, RHD4PRSHLSTAGPT1000 |
| RHD4CZ6A015PT1402 |  | Primary Test for HDPE Pipline 200 mm - (RD-A-1 /5)-Z6-A015-PT | 2d | 2026-10-15 | 2026-10-17 | RHD4CZ6A015PT1302 |
| RHD4CZ6A015PT1502 |  | Backfilling and warning tape works for HDPE Pipline 200 mm - (RD-A-1 /5)-Z6-A015-PT | 3d | 2026-10-18 | 2026-10-20 | RHD4CZ6A015PT1402, RHD4CZ6A015PT5100 |
|  | 4776 | **RHD4-02-002-A015-(PT)-Wash out Valve Chambers** |  | 2026-10-21 | 2026-10-29 |  |
| RHD4CZ6A015PT2101 |  | Excavation and Bedding for Wash out Valve Chambers for Potable Water Network - (RD-A-1 /5)-Z6-A015-PT | 2d | 2026-10-21 | 2026-10-22 | RHD4CZ6A015PT1502, RHD4ENSDZ6APPPT130 |
| RHD4CZ6A015PT2201 |  | PC works for Wash out Valve Chambers for Potable Water Network - (RD-A-1 /5)-Z6-A015-PT | 2d | 2026-10-24 | 2026-10-25 | RHD4CZ6A015PT2101 |
| RHD4CZ6A015PT2301 |  | Installation for Wash out Valve Chambers for Potable Water Network - (RD-A-1 /5)-Z6-A015-PT | 2d | 2026-10-26 | 2026-10-27 | RHD4CZ6A015PT2201, RHD4PRSHLDOSPT1100, RHD4PRSHLDOSPT1400, RHD4PRSHLSTAGPT1100, RHD4PRSHLSTAGPT1400 |
| RHD4CZ6A015PT2401 |  | Backfilling works for Wash out Valve Chambers for Potable Water Network - (RD-A-1 /5)-Z6-A015-PT | 2d | 2026-10-28 | 2026-10-29 | RHD4CZ6A015PT2301 |
|  | 4777 | **RHD4-02-002-A015-(PT)-Wash out Valves** |  | 2026-10-28 | 2026-11-01 |  |
| RHD4CZ6A015PT3102 |  | Installation for Wash out Valves for Potable Water Network - (RD-A-1 /5)-Z6-A015-PT | 2d | 2026-10-28 | 2026-10-29 | RHD4CZ6A015PT2301, RHD4PRSHLDOSPT1200, RHD4PRSHLSTAGPT1200 |
| RHD4CZ6A015PT3202 |  | Stem and Service box for Wash out Valves for Potable Water Network - (RD-A-1 /5)-Z6-A015-PT | 2d | 2026-10-31 | 2026-11-01 | RHD4CZ6A015PT3102, RHD4CZ6A015PT2401, RHD4PRSHLDOSPT1300, RHD4PRSHLSTAGPT1300 |
|  | 4780 | **RHD4-02-002-A015-(PT)-Fire Hydrant** |  | 2026-10-21 | 2026-11-01 |  |
| RHD4CZ6A015PT4100 |  | Excavation and Bedding and Pipe Installation for Fire Hydrant - (RD-A-1 /5)-Z6-A015-PT | 2d | 2026-10-21 | 2026-10-22 | RHD4CZ6A015PT1502, RHD4ENSDZ6APPPT130 |
| RHD4CZ6A015PT4200 |  | Valve Installation for Fire Hydrant - (RD-A-1 /5)-Z6-A015-PT | 2d | 2026-10-24 | 2026-10-25 | RHD4CZ6A015PT4100 |
| RHD4CZ6A015PT4300 |  | Stem for Fire Hydrant - (RD-A-1 /5)-Z6-A015-PT | 2d | 2026-10-26 | 2026-10-27 | RHD4CZ6A015PT4200 |
| RHD4CZ6A015PT4400 |  | Fire Installation for Fire Hydrant - (RD-A-1 /5)-Z6-A015-PT | 2d | 2026-10-28 | 2026-10-29 | RHD4CZ6A015PT4300, RHD4PRSHLDOSPT1500, RHD4PRSHLSTAGPT1500 |
| RHD4CZ6A015PT4500 |  | Protection Barriers for Fire Hydrant - (RD-A-1 /5)-Z6-A015-PT | 2d | 2026-10-31 | 2026-11-01 | RHD4CZ6A015PT4400 |
|  | 4781 | **RHD4-02-002-A015-(PT)-Concrete Encasement** |  | 2026-10-15 | 2026-10-17 |  |

| ID | WBS | Task | Duration | Start | Finish | Predecessors |
| --- | --- | --- | --- | --- | --- | --- |
| RHD4CZ6A015PT5100 |  | Pipe Encasement for Potable Pipelines - (RD-A-1 /5)-Z6-A015-PT | 2d | 2026-10-15 | 2026-10-17 | RHD4CZ6A015PT1302 |
|  | 4773 | **RHD4-02-002-A015-(PT)-Gate Valves (Direct Buried)** |  | 2026-10-13 | 2026-10-22 |  |
| RHD4CZ6A015PT3100 |  | Installation for Direct Buried Gate Valves - (RD-A-1 /5)-Z6-A015-PT | 2d | 2026-10-13 | 2026-10-14 | RHD4CZ6A015PT1302 FF, RHD4CZ6A015PT1302 SS, RHD4PRSHLDOSPT1200, RHD4PRSHLSTAGPT1200 |
| RHD4CZ6A015PT3200 |  | Stem and Service box for Direct Buried Gate Valves - (RD-A-1 /5)-Z6-A015-PT | 2d | 2026-10-21 | 2026-10-22 | RHD4CZ6A015PT3100, RHD4CZ6A015PT1502, RHD4PRSHLDOSPT1300, RHD4PRSHLSTAGPT1300, RHD4CZ6A015PT1504 |
|  | 4782 | **RHD4-02-002-Z6-A015-Irrigation Network - IRR** |  | 2026-10-08 | 2026-11-18 |  |
|  | 4783 | **RHD4-02-002-A015-(IRR)-HDPE Pipes - 160 mm diameter** |  | 2026-10-08 | 2026-11-07 |  |
| RHD4CZ6A015IRR1100 |  | Excavation works for HDPE Pipline 160 mm - (RD-A-1 /5)-Z6-A015-IRR | 7d | 2026-10-08 | 2026-10-15 | RHD4ENSDZ6APPIRR140, RHD4ENMSRR2000, RHD4CZ6A015PT1102 |
| RHD4CZ6A015IRR1200 |  | Bedding works for HDPE Pipline 160 mm - (RD-A-1 /5)-Z6-A015-IRR | 5d | 2026-10-17 | 2026-10-21 | RHD4CZ6A015IRR1100 |
| RHD4CZ6A015IRR1300 |  | Installing for HDPE Pipline 160 mm - (RD-A-1 /5)-Z6-A015-IRR | 7d | 2026-10-22 | 2026-10-29 | RHD4CZ6A015IRR1200, RHD4PRSHLDOSIRR1000, RHD4PRSHLSTAGIRR1000 |
| RHD4CZ6A015IRR1400 |  | Primary Test for HDPE Pipline 160 mm - (RD-A-1 /5)-Z6-A015-IRR | 2d | 2026-10-31 | 2026-11-01 | RHD4CZ6A015IRR1300, RHD4CZ6A015IRR3100 |
| RHD4CZ6A015IRR1500 |  | Backfilling and warning tape works for HDPE Pipline 160 mm - (RD-A-1 /5)-Z6-A015-IRR | 5d | 2026-11-02 | 2026-11-07 | RHD4CZ6A015IRR1400 |
|  | 4791 | **RHD4-02-002-A015-(IRR)-Gate Valves (Direct Buried)** |  | 2026-10-27 | 2026-11-10 |  |
| RHD4CZ6A015IRR3100 |  | Installation for Direct Buried Gate Valves - (RD-A-1 /5)-Z6-A015-IRR | 3d | 2026-10-27 | 2026-10-29 | RHD4CZ6A015IRR1300 SS, RHD4CZ6A015IRR1300 FF, RHD4PRSHLDOSIRR1100, RHD4PRSHLSTAGIRR1100 |
| RHD4CZ6A015IRR3200 |  | Stem and Service box for Direct Buried Gate Valves - (RD-A-1 /5)-Z6-A015-IRR | 3d | 2026-11-08 | 2026-11-10 | RHD4CZ6A015IRR3100, RHD4CZ6A015IRR1500, RHD4PRSHLDOSIRR1300, RHD4PRSHLSTAGIRR1300 |
|  | 4794 | **RHD4-02-002-A015-(IRR)-Wash out Chamber** |  | 2026-11-08 | 2026-11-16 |  |
| RHD4CZ6A015IRR2101 |  | Excavation and Bedding for Wash out Chamber for Irrigation Network - (RD-A-1 /5)-Z6-A015-IRR | 2d | 2026-11-08 | 2026-11-09 | RHD4CZ6A015IRR1500, RHD4ENSDZ6APPIRR140 |
| RHD4CZ6A015IRR2201 |  | PC works for Wash out Chamber for Irrigation Network - (RD-A-1 /5)-Z6-A015-IRR | 2d | 2026-11-10 | 2026-11-11 | RHD4CZ6A015IRR2101 |
| RHD4CZ6A015IRR2301 |  | Installation for Wash out Chamber for Irrigation Network - (RD-A-1 /5)-Z6-A015-IRR | 2d | 2026-11-12 | 2026-11-14 | RHD4CZ6A015IRR2201, RHD4PRSHLDOSIRR1200, RHD4PRSHLDOSIRR1400, RHD4PRSHLSTAGIRR1200, RHD4PRSHLSTAGIRR1400 |
| RHD4CZ6A015IRR2401 |  | Backfilling works for Wash out Chamber for Irrigation Network - (RD-A-1 /5)-Z6-A015-IRR | 2d | 2026-11-15 | 2026-11-16 | RHD4CZ6A015IRR2301 |
|  | 4795 | **RHD4-02-002-A015-(IRR)-Wash out Valves** |  | 2026-11-15 | 2026-11-18 |  |
| RHD4CZ6A015IRR3102 |  | Installation for Wash out Valve for Irrigation Network - (RD-A-1 /5)-Z6-A015-IRR | 2d | 2026-11-15 | 2026-11-16 | RHD4CZ6A015IRR2301, RHD4PRSHLDOSIRR1100, RHD4PRSHLSTAGIRR1100 |
| RHD4CZ6A015IRR3202 |  | Stem and Service box for Wash out Valve for Irrigation Network - (RD-A-1 /5)-Z6-A015-IRR | 2d | 2026-11-17 | 2026-11-18 | RHD4CZ6A015IRR3102, RHD4CZ6A015IRR2401, RHD4PRSHLDOSIRR1300, RHD4PRSHLSTAGIRR1300, RHD4CZ6A015IRR3200 |
|  | 4796 | **RHD4-02-002-A015-(IRR)-Air Valve Chamber** |  | 2026-11-08 | 2026-11-16 |  |
| RHD4CZ6A015IRR2102 |  | Excavation and Bedding for Valve Chamber for Irrigation Network - (RD-A-1 /5)-Z6-A015-IRR | 2d | 2026-11-08 | 2026-11-09 | RHD4CZ6A015IRR1500, RHD4ENSDZ6APPIRR140 |
| RHD4CZ6A015IRR2202 |  | PC works for Valve Chamber for Irrigation Network - (RD-A-1 /5)-Z6-A015-IRR | 2d | 2026-11-10 | 2026-11-11 | RHD4CZ6A015IRR2102 |
| RHD4CZ6A015IRR2302 |  | Installation for Valve Chamber for Irrigation Network - (RD-A-1 /5)-Z6-A015-IRR | 2d | 2026-11-12 | 2026-11-14 | RHD4CZ6A015IRR2202, RHD4PRSHLDOSIRR1200, RHD4PRSHLDOSIRR1400, RHD4PRSHLSTAGIRR1200, RHD4PRSHLSTAGIRR1400 |
| RHD4CZ6A015IRR2402 |  | Backfilling works for Valve Chamber for Irrigation Network - (RD-A-1 /5)-Z6-A015-IRR | 2d | 2026-11-15 | 2026-11-16 | RHD4CZ6A015IRR2302 |
|  | 4797 | **RHD4-02-002-A015-(IRR)-Air Valves** |  | 2026-11-15 | 2026-11-18 |  |
| RHD4CZ6A015IRR3103 |  | Installation for Air Valves for Irrigation Network - (RD-A-1 /5)-Z6-A015-IRR | 2d | 2026-11-15 | 2026-11-16 | RHD4CZ6A015IRR2302, RHD4PRSHLDOSIRR1100, RHD4PRSHLSTAGIRR1100 |
| RHD4CZ6A015IRR3203 |  | Stem and Service box for Air Valves for Irrigation Network - (RD-A-1 /5)-Z6-A015-IRR | 2d | 2026-11-17 | 2026-11-18 | RHD4CZ6A015IRR3103, RHD4CZ6A015IRR2402, RHD4PRSHLDOSIRR1300, RHD4PRSHLSTAGIRR1300 |
|  | 4798 | **RHD4-02-002-A015-(IRR)-Concrete Encasement** |  |  |  |  |
|  | 4816 | **RHD4-02-002-Z6-A015-Medium Voltage Network - MV** |  |  |  |  |
|  | 4817 | **RHD4-02-002-A015-(MV)-Medium Voltage cable trench** |  |  |  |  |
|  | 4819 | **RHD4-02-002-A015-(MV)-Medium Voltage cables 3Cx 500 mm²** |  |  |  |  |
|  | 4823 | **RHD4-02-002-Z6-A015-Low Voltage Network - LV** |  | 2027-02-20 | 2027-03-14 |  |
|  | 4826 | **RHD4-02-002-A015-(LV)-Low Voltage cables** |  | 2027-02-20 | 2027-03-14 |  |
| RHD4CZ6A015LV3100 |  | Excavation for Low Voltage Cables for Low Voltage Network - (RD-A-1 /5)-Z6-A015-LV | 3d | 2027-02-20 | 2027-02-23 | RHD4ENSDZ6APPLV160, RHD4CZ6C062LV3400, RHD4CZ6A015RD3100 |
| RHD4CZ6A015LV3200 |  | Cable Laying of Low Voltage Cables for Low Voltage Network - (RD-A-1 /5)-Z6-A015-LV | 5d | 2027-02-24 | 2027-03-01 | RHD4CZ6A015LV3100, RHD4PRSHLDOSLV1100, RHD4ENMSLV2000, RHD4ENMSLV2010, RHD4PRSHLSTAGLV1100 |
| RHD4CZ6A015LV3300 |  | Warning tape and Backfill for Low Voltage Cables for Low Voltage Network - (RD-A-1 /5)-Z6-A015-LV | 5d | 2027-03-02 | 2027-03-07 | RHD4CZ6A015LV3200 |
| RHD4CZ6A015LV3400 |  | Testing of Low Voltage Cables for Low Voltage Network - (RD-A-1 /5)-Z6-A015-LV | 3d | 2027-03-08 | 2027-03-14 | RHD4CZ6A015LV3300 |
|  | 4829 | **RHD4-02-002-Z6-A015-Street Lighting Network - SL** |  | 2027-03-15 | 2027-04-11 |  |
|  | 4832 | **RHD4-02-002-A015-(SL)-Street Lighting cables** |  | 2027-03-15 | 2027-03-27 |  |
| RHD4CZ6A015SL3100 |  | Excavation for Street Lighting Cables for Street Lighting Network - (RD-A-1 /5)-Z6-A015-SL | 3d | 2027-03-15 | 2027-03-17 | RHD4ENSDZ6APPSL170, RHD4CZ6A015LV3400 |
| RHD4CZ6A015SL3200 |  | Cable Laying of Street Lighting Cables for Street Lighting Network - (RD-A-1 /5)-Z6-A015-SL | 3d | 2027-03-18 | 2027-03-21 | RHD4CZ6A015SL3100, RHD4PRSHLDOSSL1100, RHD4ENMSSL2000, RHD4ENMSSL2010, RHD4PRSHLSTAGSL1100 |
| RHD4CZ6A015SL3300 |  | Warning tape and Backfill for Street Lighting Cables for Street Lighting Network - (RD-A-1 /5)-Z6-A015-SL | 3d | 2027-03-22 | 2027-03-24 | RHD4CZ6A015SL3200 |
| RHD4CZ6A015SL3400 |  | Testing of Street Lighting Cables for Street Lighting Network - (RD-A-1 /5)-Z6-A015-SL | 2d | 2027-03-25 | 2027-03-27 | RHD4CZ6A015SL3300 |
|  | 4833 | **RHD4-02-002-A015-(SL)-Street Lighting Poles** |  | 2027-03-28 | 2027-04-11 |  |
| RHD4CZ6A015SL1100 |  | Excavation for RC Base for Lighting Poles for Street Lighting Network - (RD-A-1 /5)-Z6-A015-SL | 2d | 2027-03-28 | 2027-03-29 | RHD4ENSDZ6APPSL170, RHD4CZ6A015SL3400 |
| RHD4CZ6A015SL1200 |  | Installation for RC Base for Lighting Poles for Street Lighting Network - (RD-A-1 /5)-Z6-A015-SL | 2d | 2027-03-30 | 2027-03-31 | RHD4CZ6A015SL1100 |
| RHD4CZ6A015SL1300 |  | Backfill for RC Base for Lighting Poles for Street Lighting Network - (RD-A-1 /5)-Z6-A015-SL | 2d | 2027-04-01 | 2027-04-03 | RHD4CZ6A015SL1200 |
| RHD4CZ6A015SL1400 |  | Installation for Lighting Poles for Street Lighting Network - (RD-A-1 /5)-Z6-A015-SL | 2d | 2027-04-04 | 2027-04-05 | RHD4CZ6A015SL1300, RHD4CZ6A015SL3400, RHD4PRSHLDOSSL1200, RHD4ENMSSL2000, RHD4ENMSSL2010, RHD4PRSHLSTAGSL1200 |
| RHD4CZ6A015SL1500 |  | Luminaire Installation for Lighting Poles for Street Lighting Network - (RD-A-1 /5)-Z6-A015-SL | 3d | 2027-04-08 | 2027-04-11 | RHD4CZ6A015SL1400, RHD4CZ6A015SL6100, RHD4PRSHLDOSSL1300, RHD4PRSHLSTAGSL1300 |
|  | 4835 | **RHD4-02-002-A015-(SL)-Street Lighting Earthing System** |  | 2027-04-06 | 2027-04-07 |  |
| RHD4CZ6A015SL6100 |  | Installation of Earthing for Lighting Poles and Fedder Pillers for Street Lighting Network - (RD-A-1 /5)-Z6-A015-SL | 2d | 2027-04-06 | 2027-04-07 | RHD4CZ6A015SL1400, RHD4ENMSER2000, RHD4ENMSER2010 |
|  | 4841 | **RHD4-02-002-Z6-A015-Telecommunications Network - TC** |  | 2026-05-30 | 2027-05-05 |  |
|  | 4842 | **RHD4-02-002-A015-(TC)-Telecommunications Ducts** |  | 2027-04-12 | 2027-05-05 |  |
| RHD4CZ6A015TC2100 |  | Excavation of HDPE Ducts for Telecom Network - (RD-A-1 /5)-Z6-A015-TC | 6d | 2027-04-12 | 2027-04-18 | RHD4ENSDZ6APPTC190, RHD4CZ6A015SL1500 |
| RHD4CZ6A015TC2200 |  | Installation of HDPE Ducts for Telecom Network - (RD-A-1 /5)-Z6-A015-TC | 9d | 2027-04-19 | 2027-04-28 | RHD4CZ6A015TC2100, RHD4PRSHLDOSTC1000, RHD4PRSHLSTAGTC1000 |
| RHD4CZ6A015TC2400 |  | Backfilling of HDPE Ducts for Telecom Network - (RD-A-1 /5)-Z6-A015-TC | 6d | 2027-04-29 | 2027-05-05 | RHD4CZ6A015TC2200, RHD4CZ6A015TC5200 |
|  | 4843 | **RHD4-02-002-A015-(TC)-Telecommunications Manholes** |  | 2027-04-19 | 2027-04-25 |  |
| RHD4CZ6A015TC5100 |  | Excavation for Manholes for Telecom Network - (RD-A-1 /5)-Z6-A015-TC | 3d | 2027-04-19 | 2027-04-21 | RHD4CZ6A015TC2100, RHD4ENSDZ6APPTC190 |
| RHD4CZ6A015TC5200 |  | Installation of Manholes for Telecom Network - (RD-A-1 /5)-Z6-A015-TC | 3d | 2027-04-22 | 2027-04-25 | RHD4CZ6A015TC5100, RHD4CZ6A015TC2200 SS, RHD4PRSHLDOSTC1200, RHD4PRSHLSTAGTC1200 |
|  | 5411 | **RHD4-02-002-A015-(TC)-Telecomminications Road Crossings** |  | 2026-05-30 | 2026-06-07 |  |
| RHD4CZ6A015TC3100 |  | Excavation for Road Crossings for Telecom Network - (RD-A-1 /5)-Z6-A015-TC | 2d | 2026-05-30 | 2026-05-31 | RHD4CZ6A015ST3301 |
| RHD4CZ6A015TC3200 |  | Installation of Road Crossings for Telecom Network - (RD-A-1 /5)-Z6-A015-TC | 2d | 2026-06-01 | 2026-06-02 | RHD4CZ6A015TC3100 |
| RHD4CZ6A015TC3300 |  | Pouring of Road Crossings for Telecom Network - (RD-A-1 /5)-Z6-A015-TC | 2d | 2026-06-03 | 2026-06-04 | RHD4CZ6A015TC3200 |
| RHD4CZ6A015TC3400 |  | Backfilling of Road Crossings for Telecom Network - (RD-A-1 /5)-Z6-A015-TC | 2d | 2026-06-06 | 2026-06-07 | RHD4CZ6A015TC3300 |
|  | 4845 | **RHD4-02-002-Z6-A015-Information and Communication Technologies - ICT** |  | 2026-05-30 | 2027-06-03 |  |
|  | 4846 | **RHD4-02-002-A015-(ICT)-Information and Communication Technologies Ducts** |  | 2027-05-06 | 2027-06-03 |  |
| RHD4CZ6A015ICT2100 |  | Excavation of HDPE Ducts for ICT Network - (RD-A-1 /5)-Z6-A015-ICT | 6d | 2027-05-06 | 2027-05-12 | RHD4ENSDZ6APPICT200, RHD4CZ6A015TC2400 |

| ID | WBS | Task | Duration | Start | Finish | Predecessors |
| --- | --- | --- | --- | --- | --- | --- |
| RHD4CZ6A015ICT2200 |  | Installation of HDPE Ducts for ICT Network - (RD-A-1 /5)-Z6-A015-ICT | 9d | 2027-05-13 | 2027-05-27 | RHD4CZ6A015ICT2100, RHD4PRSHLDOSICT1000, RHD4PRSHLSTAGICT1000 |
| RHD4CZ6A015ICT2400 |  | Backfilling of HDPE Ducts for ICT Network - (RD-A-1 /5)-Z6-A015-ICT | 6d | 2027-05-29 | 2027-06-03 | RHD4CZ6A015ICT2200, RHD4CZ6A015ICT5200 |
|  | 4847 | **RHD4-02-002-A015-(ICT)-Information and Communication Technologies Manholes** |  | 2027-05-13 | 2027-05-24 |  |
| RHD4CZ6A015ICT5100 |  | Excavation for Manholes for ICT Network - (RD-A-1 /5)-Z6-A015-ICT | 3d | 2027-05-13 | 2027-05-20 | RHD4CZ6A015ICT2100, RHD4ENSDZ6APPICT200 |
| RHD4CZ6A015ICT5200 |  | Installation of Manholes for ICT Network - (RD-A-1 /5)-Z6-A015-ICT | 3d | 2027-05-22 | 2027-05-24 | RHD4CZ6A015ICT5100, RHD4PRSHLDOSICT1200, RHD4PRSHLSTAGICT1200 |
|  | 4848 | **RHD4-02-002-A015-(ICT)-Information and Communication Technologies Road Crossings** |  | 2026-05-30 | 2026-08-23 |  |
| RHD4CZ6A015ICT3100 |  | Excavation for Road Crossings for ICT Network - (RD-A-1 /5)-Z6-A015-ICT | 2d | 2026-05-30 | 2026-05-31 | RHD4ENSDZ6APPICT200, RHD4CZ6A015ST3301 |
| RHD4CZ6A015ICT3200 |  | Installation of Road Crossings for ICT Network - (RD-A-1 /5)-Z6-A015-ICT | 2d | 2026-08-17 | 2026-08-18 | RHD4CZ6A015ICT3100, RHD4PRSHLDOSICT1100, RHD4PRSHLSTAGICT1100 |
| RHD4CZ6A015ICT3300 |  | Pouring of Road Crossings for ICT Network - (RD-A-1 /5)-Z6-A015-ICT | 2d | 2026-08-19 | 2026-08-20 | RHD4CZ6A015ICT3200 |
| RHD4CZ6A015ICT3400 |  | Backfilling of Road Crossings for ICT Network - (RD-A-1 /5)-Z6-A015-ICT | 2d | 2026-08-22 | 2026-08-23 | RHD4CZ6A015ICT3300 |
|  | 4836 | **RHD4-02-002-Z6-A015-Landscape Network - LS** |  |  |  |  |
|  | 4837 | **RHD4-02-002-A015-(LS)-Landscape Lighting cables** |  |  |  |  |
|  | 4838 | **RHD4-02-002-A015-(LS)-Landscape Feeder Pillars** |  |  |  |  |
|  | 4839 | **RHD4-02-002-A015-(LS)-Landscape Bollard Poles** |  |  |  |  |
|  | 4840 | **RHD4-02-002-A015-(LS)-Landscape Feeder Pillars Earthing** |  |  |  |  |
|  | 4849 | **RHD4-02-002-Z6-A015-Security Network - CCTV** |  | 2027-06-05 | 2027-06-17 |  |
|  | 4850 | **RHD4-02-002-A015-(CCTV)-Civil Works** |  |  |  |  |
|  | 4851 | **RHD4-02-002-A015-(CCTV)-CCTV Poles** |  | 2027-06-05 | 2027-06-13 |  |
| RHD4CZ6A015CCTV1100 |  | Excavation for RC Base for CCTV Poles for Security Network - (RD-A-1 /5)-Z6-A015-CCTV | 2d | 2027-06-05 | 2027-06-06 | RHD4ENSDZ6APPCCTV210, RHD4CZ6A015ICT2400 |
| RHD4CZ6A015CCTV1200 |  | Installation for RC Base for CCTV Poles for Security Network - (RD-A-1 /5)-Z6-A015-CCTV | 2d | 2027-06-07 | 2027-06-08 | RHD4CZ6A015CCTV1100 |
| RHD4CZ6A015CCTV1300 |  | Backfill for RC Base for CCTV Poles for Security Network - (RD-A-1 /5)-Z6-A015-CCTV | 2d | 2027-06-09 | 2027-06-10 | RHD4CZ6A015CCTV1200 |
| RHD4CZ6A015CCTV1400 |  | Installation for CCTV Poles for Security Network - (RD-A-1 /5)-Z6-A015-CCTV | 2d | 2027-06-12 | 2027-06-13 | RHD4CZ6A015CCTV1300, RHD4PRSHLDOSCCTV1000, RHD4PRSHLSTACCTV1000 |
|  | 4852 | **RHD4-02-002-A015-(CCTV)-Camera** |  | 2027-06-14 | 2027-06-15 |  |
| RHD4CZ6A015CCTV3100 |  | Installation for Cameras for Security Network - (RD-A-1 /5)-Z6-A015-CCTV | 2d | 2027-06-14 | 2027-06-15 | RHD4CZ6A015CCTV1400, RHD4PRSHLDOSCCTV1100, RHD4PRSHLSTACCTV1100 |
|  | 4853 | **RHD4-02-002-A015-(CCTV)-Power and Infrastructure** |  |  |  |  |
|  | 4855 | **RHD4-02-002-A015-(CCTV)-CCTV Panels and Components** |  | 2027-06-16 | 2027-06-17 |  |
| RHD4CZ6A015CCTV6100 |  | Installation for CCTV Panels for Security Network - (RD-A-1 /5)-Z6-A015-CCTV | 2d | 2027-06-16 | 2027-06-17 | RHD4CZ6A015CCTV3100, RHD4PRSHLDOSCCTV1200, RHD4PRSHLSTACCTV1200, RHD4PRLOLSTACCTV1001 |
|  | 4866 | **RHD4-02-002-Z6-C052** |  | 2026-07-22 | 2027-04-06 |  |
|  | 4897 | **RHD4-02-002-Z6-C052-Crossings Sewage Network - SWCr** |  |  |  |  |
|  | 4907 | **RHD4-02-002-C052-(SWCr)-MH Works - 1200 mm diameter** |  |  |  |  |
|  | 4903 | **RHD4-02-002-C052-(SWCr)-UPVC Pipes - 200 mm diameter** |  |  |  |  |
|  | 4941 | **RHD4-02-002-Z6-C052-Crossings Potable Network - PTCr** |  |  |  |  |
|  | 4943 | **RHD4-02-002-C052-(PTCr)-HDPE Pipes - 160 mm diameter** |  |  |  |  |
|  | 4942 | **RHD4-02-002-C052-(PTCr)-HDPE Pipes - 110 mm diameter** |  |  |  |  |
|  | 4947 | **RHD4-02-002-C052-(PTCr)-Gate Valves (Direct Buried)** |  |  |  |  |
|  | 4952 | **RHD4-02-002-C052-(PTCr)-Air Valve Chambers** |  |  |  |  |
|  | 4953 | **RHD4-02-002-C052-(PTCr)-Air Valves** |  |  |  |  |
|  | 4954 | **RHD4-02-002-C052-(PTCr)-Fire Hydrant** |  |  |  |  |
|  | 4988 | **RHD4-02-002-Z6-C052-Crossings Irrigation Network - IRRC** |  |  |  |  |
|  | 4989 | **RHD4-02-002-C052-(IRRC)-HDPE Pipes - 160 mm diameter** |  |  |  |  |
|  | 4997 | **RHD4-02-002-C052-(IRRC)-Gate Valves (Direct Buried)** |  |  |  |  |
|  | 5000 | **RHD4-02-002-C052-(IRRC)-Wash out Chamber** |  |  |  |  |
|  | 5001 | **RHD4-02-002-C052-(IRRC)-Wash out Valves** |  |  |  |  |
|  | 5045 | **RHD4-02-002-Z6-C052-Road Works - RD** |  | 2026-08-26 | 2027-04-06 |  |
|  | 5046 | **RHD4-02-002-C052-(RD)-Subgrade** |  | 2026-08-26 | 2026-09-05 |  |
| RHD4CZ6C052RD1100 |  | Supply, lay and compaction subgrade compacted thickness 300 mm for Roads - (RD-C-5 /2)-Z6-C052-RD | 9d | 2026-08-26 | 2026-09-05 | RHD4ENSDZ6APPRD220, RHD4ENSDZ6APPEW100 SS, RHD4CZ6C052ST1502, RHD4CZ6C052ST1503, RHD4CZ6C052ST3301, RHD4CZ6C052ICT3400, RHD4CZ6C052TC3400 |
|  | 5047 | **RHD4-02-002-C052-(RD)-Aggregate Base Course** |  | 2026-09-06 | 2026-09-08 |  |
| RHD4CZ6C052RD2100 |  | Supply, lay and compaction Aggregate base course compacted thickness 300 mmfor Roads - (RD-C-5 /2)-Z6-C052-RD | 3d | 2026-09-06 | 2026-09-08 | RHD4PRSHLDOSRD1000, RHD4PRSHLSTAGRD1000, RHD4CZ6C052RD1100 |
|  | 5048 | **RHD4-02-002-C052-(RD)-Bituminous base course Two Layers, including (MC1)&(RC2)** |  | 2026-09-09 | 2027-01-19 |  |
| RHD4CZ6C052RD3100 |  | Supply, lay and Asphaltic base course including Prime Coat (MC1) for 1st Layer - (RD-C-5 /2)-Z6-C052-RD | 2d | 2026-09-09 | 2026-09-10 | RHD4CZ6C052RD2100, RHD4PRSHLDOSRD1100, RHD4ENMSASPH2000, RHD4ENMSASPH2010, RHD4PRSHLSTAGRD1100 |
| RHD4CZ6C052RD3200 |  | Supply, lay and Asphaltic base course including Tack Coat (RC2) for 2nd Layer - (RD-C-5 /2)-Z6-C052-RD | 2d | 2027-01-18 | 2027-01-19 | RHD4PRSHLDOSRD1100, RHD4PRSHLSTAGRD1100, RHD4CZ6C052ICT2400 |
|  | 5050 | **RHD4-02-002-C052-(RD)-Precast Concrete Curb** |  | 2027-03-15 | 2027-03-17 |  |
| RHD4CZ6C052RD5100 |  | Supply and installation Precast Concrete Kerb for Roads - (RD-C-5 /2)-Z6-C052-RD | 3d | 2027-03-15 | 2027-03-17 | RHD4CZ6C052RD3200, RHD4PRSHLDOSRD1200, RHD4ENMSRD2000, RHD4ENMSRD2010, RHD4PRSHLSTAGRD1200, RHD4CZ6RA01RD5100 |
|  | 5053 | **RHD4-02-002-C052-(RD)-Traffic Signage** |  | 2027-03-27 | 2027-04-01 |  |
| RHD4CZ6C052RD8100 |  | Installation of Traffic Signage for Road Network - (RD-C-5 /2)-Z6-C052-RD | 6d | 2027-03-27 | 2027-04-01 | RHD4CZ6C052RD5100, RHD4CZ6C052TC2400, RHD4CZ6C052ICT2400, RHD4PRSHLDOSRD1600, RHD4PRSHLSTAGRD1600, RHD4CZ6RA01RD8100 |
|  | 5051 | **RHD4-02-002-C052-(RD)-Precast Interlocking Block Pavers** |  |  |  |  |
|  | 5049 | **RHD4-02-002-C052-(RD)-Bituminous concrete wearing course including tack coat (RC2)** |  | 2027-03-18 | 2027-03-20 |  |
| RHD4CZ6C052RD4100 |  | Supply, lay and compaction Asphaltic wearing course including tack Coat (RC2)for Road Network - (RD-C-5 /2)-Z6-C052-RD | 2d | 2027-03-18 | 2027-03-20 | RHD4CZ6C052RD5100 |
|  | 5054 | **RHD4-02-002-C052-(RD)-Speed Table and Wheel Stopper** |  |  |  |  |
|  | 5052 | **RHD4-02-002-C052-(RD)-Pavement Marking** |  | 2027-04-03 | 2027-04-06 |  |
| RHD4CZ6C052RD7100 |  | Pavement Markings for Road Network - (RD-C-5 /2)-Z6-C052-RD | 4d | 2027-04-03 | 2027-04-06 | RHD4CZ6C052RD4100, RHD4PRSHLDOSRD1500, RHD4PRSHLSTAGRD1500, RHD4CZ6C052RD8100 |
|  | 4870 | **RHD4-02-002-Z6-C052-Storm Network - ST** |  | 2026-07-22 | 2026-09-16 |  |
|  | 3739 | **RHD4-02-002-C052-(ST)-GRP Pipes - 700 mm diameter** |  | 2026-07-22 | 2026-08-02 |  |
| RHD4CZ6C052ST1103 |  | Excavation works for GRP Pipe Line 700 mm - (RD-C-5 /2)-Z6-C052-ST | 2d | 2026-07-22 | 2026-07-23 | RHD4ENSDZ5APPST110, RHD4CZ6C062ST1106, RHD4CZ7RA03RA3000 |
| RHD4CZ6C052ST1203 |  | Bedding works for GRP Pipe Line 700 mm - (RD-C-5 /2)-Z6-C052-ST | 2d | 2026-07-25 | 2026-07-26 | RHD4CZ6C052ST1103 |
| RHD4CZ6C052ST1303 |  | Installing for GRP Pipe Line 700 mm - (RD-C-5 /2)-Z6-C052-ST | 2d | 2026-07-27 | 2026-07-28 | RHD4CZ6C052ST1203 |
| RHD4CZ6C052ST1403 |  | Primary Test for GRP Pipe Line 700 mm - (RD-C-5 /2)-Z6-C052-ST | 2d | 2026-07-29 | 2026-07-30 | RHD4CZ6C052ST1303 |
| RHD4CZ6C052ST1503 |  | Backfilling and warning tape works for GRP Pipe Line 700 mm - (RD-C-5 /2)-Z6-C052-ST | 2d | 2026-08-01 | 2026-08-02 | RHD4CZ6C052ST1403 |
|  | 4888 | **RHD4-02-002-C052-(ST)-MH Works - 1500 mm diameter** |  | 2026-07-25 | 2026-09-12 |  |
| RHD4CZ6C052ST3101 |  | Excavation and PC Blinding works for MH 1500 mm - (RD-C-5 /2)-Z6-C052-ST | 2d | 2026-07-25 | 2026-07-26 | RHD4CZ6C052RW3000, RHD4ENSDZ6APPST110, RHD4ENMSST2000, RHD4CZ6C052ST1103 |

| ID | WBS | Task | Duration | Start | Finish | Predecessors |
| --- | --- | --- | --- | --- | --- | --- |
| RHD4CZ6C052ST3201 |  | Installation of Base for MH 1500 mm - (RD-C-5 /2)-Z6-C052-ST | 2d | 2026-07-27 | 2026-07-28 | RHD4CZ6C052ST3101, RHD4PRSHLSTAGST1605 |
| RHD4CZ6C052ST3301 |  | MH Ring and C.Slab works and Backfilling works for MH 1500 mm - (RD-C-5 /2)-Z6-C052-ST | 2d | 2026-07-29 | 2026-07-30 | RHD4CZ6C052ST3201, RHD4PRSHLDOSST1605 |
| RHD4CZ6C052ST3401 |  | Steel Cover for MH 1500 mm - (RD-C-5 /2)-Z6-C052-ST | 2d | 2026-09-06 | 2026-09-07 | RHD4CZ6C052ST3301, RHD4CZ6C052ST2501, RHD4PRSHLDOSST1705, RHD4PRSHLSTAGST1705 |
| RHD4CZ6C052ST3501 |  | Finishing, Benching, Testing works for MH 1500 mm - (RD-C-5 /2)-Z6-C052-ST | 2d | 2026-09-10 | 2026-09-12 | RHD4CZ6C052ST3401, RHD4CZ6C052ST2500 |
|  | 4887 | **RHD4-02-002-C052-(ST)-MH Works - 1200 mm diameter** |  | 2026-07-27 | 2026-09-16 |  |
| RHD4CZ6C052ST3100 |  | Excavation and PC Blinding works for MH 1200 mm - (RD-C-5 /2)-Z6-C052-ST | 3d | 2026-07-27 | 2026-07-29 | RHD4CZ6C052ST3101, RHD4ENSDZ6APPST110, RHD4ENMSST2000, RHD4ENMSST2010 |
| RHD4CZ6C052ST3200 |  | Installation of Base for MH 1200 mm - (RD-C-5 /2)-Z6-C052-ST | 3d | 2026-07-30 | 2026-08-02 | RHD4CZ6C052ST3100, RHD4PRSHLSTAGST1605 |
| RHD4CZ6C052ST3300 |  | MH Ring and C.Slab works and Backfilling works for MH 1200 mm - (RD-C-5 /2)-Z6-C052-ST | 3d | 2026-08-03 | 2026-08-05 | RHD4CZ6C052ST3200, RHD4PRSHLDOSST1605 |
| RHD4CZ6C052ST3400 |  | Steel Cover for MH 1200 mm - (RD-C-5 /2)-Z6-C052-ST | 3d | 2026-09-10 | 2026-09-13 | RHD4CZ6C052ST3300, RHD4CZ6C052ST2501, RHD4CZ6C052ST2500, RHD4PRSHLDOSST1705, RHD4PRSHLSTAGST1705, RHD4CZ6C052ST3401 |
| RHD4CZ6C052ST3500 |  | Finishing, Benching, Testing works for MH 1200 mm - (RD-C-5 /2)-Z6-C052-ST | 3d | 2026-09-14 | 2026-09-16 | RHD4CZ6C052ST3400 |
|  | 4876 | **RHD4-02-002-C052-(ST)-GRP Pipes - 900 mm diameter** |  |  |  |  |
|  | 4875 | **RHD4-02-002-C052-(ST)-GRP Pipes - 800 mm diameter** |  |  |  |  |
|  | 4873 | **RHD4-02-002-C052-(ST)-GRP Pipes - 600 mm diameter** |  | 2026-07-30 | 2026-08-10 |  |
| RHD4CZ6C052ST1102 |  | Excavation works for GRP Pipe Line 600 mm - (RD-C-5 /2)-Z6-C052-ST | 2d | 2026-07-30 | 2026-08-01 | RHD4ENSDZ6APPST110, RHD4CZ6C052ST3100 |
| RHD4CZ6C052ST1202 |  | Bedding works for GRP Pipe Line 600 mm - (RD-C-5 /2)-Z6-C052-ST | 2d | 2026-08-02 | 2026-08-03 | RHD4CZ6C052ST1102 |
| RHD4CZ6C052ST1302 |  | Installing for GRP Pipe Line 600 mm - (RD-C-5 /2)-Z6-C052-ST | 2d | 2026-08-04 | 2026-08-05 | RHD4CZ6C052ST1202, RHD4PRSHLSTAGST1005, RHD4PRSHLDOSST1605, RHD4PRSHLPOST1000, RHD4PRSHLDOSST1005 |
| RHD4CZ6C052ST1402 |  | Primary Test for GRP Pipe Line 600 mm - (RD-C-5 /2)-Z6-C052-ST | 2d | 2026-08-06 | 2026-08-08 | RHD4CZ6C052ST1302 |
| RHD4CZ6C052ST1502 |  | Backfilling and warning tape works for GRP Pipe Line 600 mm - (RD-C-5 /2)-Z6-C052-ST | 2d | 2026-08-09 | 2026-08-10 | RHD4CZ6C052ST1402, RHD4CZ6C052ST1503 |
|  | 4872 | **RHD4-02-002-C052-(ST)-GRP Pipes - 500 mm diameter** |  | 2026-08-02 | 2026-08-12 |  |
| RHD4CZ6C052ST1101 |  | Excavation works for GRP Pipe Line 500 mm - (RD-C-5 /2)-Z6-C052-ST | 2d | 2026-08-02 | 2026-08-03 | RHD4CZ6C052ST1102, RHD4ENSDZ6APPST110 |
| RHD4CZ6C052ST1201 |  | Bedding works for GRP Pipe Line 500 mm - (RD-C-5 /2)-Z6-C052-ST | 2d | 2026-08-04 | 2026-08-05 | RHD4CZ6C052ST1101 |
| RHD4CZ6C052ST1301 |  | Installing for GRP Pipe Line 500 mm - (RD-C-5 /2)-Z6-C052-ST | 2d | 2026-08-06 | 2026-08-08 | RHD4CZ6C052ST1201, RHD4CZ6C052ST1302, RHD4PRSHLSTAGST1005, RHD4PRSHLDOSST1605, RHD4PRSHLPOST1000, RHD4PRSHLDOSST1005 |
| RHD4CZ6C052ST1401 |  | Primary Test for GRP Pipe Line 500 mm - (RD-C-5 /2)-Z6-C052-ST | 2d | 2026-08-09 | 2026-08-10 | RHD4CZ6C052ST1301 |
| RHD4CZ6C052ST1501 |  | Backfilling and warning tape works for GRP Pipe Line 500 mm - (RD-C-5 /2)-Z6-C052-ST | 2d | 2026-08-11 | 2026-08-12 | RHD4CZ6C052ST1401, RHD4CZ6C052ST1502 |
|  | 4871 | **RHD4-02-002-C052-(ST)-GRP Pipes - 400 mm diameter** |  | 2026-08-04 | 2026-08-15 |  |
| RHD4CZ6C052ST1100 |  | Excavation works for GRP Pipe Line 400 mm - (RD-C-5 /2)-Z6-C052-ST | 2d | 2026-08-04 | 2026-08-05 | RHD4CZ6C052ST1101, RHD4ENSDZ6APPST110 |
| RHD4CZ6C052ST1200 |  | Bedding works for GRP Pipe Line 400 mm - (RD-C-5 /2)-Z6-C052-ST | 2d | 2026-08-06 | 2026-08-08 | RHD4CZ6C052ST1100 |
| RHD4CZ6C052ST1300 |  | Installing for GRP Pipe Line 400 mm - (RD-C-5 /2)-Z6-C052-ST | 2d | 2026-08-09 | 2026-08-10 | RHD4CZ6C052ST1200, RHD4CZ6C052ST1301, RHD4PRSHLSTAGST1005, RHD4PRSHLDOSST1605, RHD4PRSHLPOST1000, RHD4PRSHLDOSST1005 |
| RHD4CZ6C052ST1400 |  | Primary Test for GRP Pipe Line 400 mm - (RD-C-5 /2)-Z6-C052-ST | 2d | 2026-08-11 | 2026-08-12 | RHD4CZ6C052ST1300 |
| RHD4CZ6C052ST1500 |  | Backfilling and warning tape works for GRP Pipe Line 400 mm - (RD-C-5 /2)-Z6-C052-ST | 2d | 2026-08-13 | 2026-08-15 | RHD4CZ6C052ST1400, RHD4CZ6C052ST1501 |
|  | 4886 | **RHD4-02-002-C052-(ST)-UPVC Pipes - 400 mm diameter** |  | 2026-08-22 | 2026-09-05 |  |
| RHD4CZ6C052ST2101 |  | Excavation works for UPVC Pipe Line 400 mm - (RD-C-5 /2)-Z6-C052-ST | 2d | 2026-08-22 | 2026-08-23 | RHD4CZ6C052ST3300, RHD4CZ6C052ST3301, RHD4CZ6C052ST7300, RHD4CZ6C052ST8300, RHD4ENSDZ6APPST110 |
| RHD4CZ6C052ST2201 |  | Bedding works for UPVC Pipe Line 400 mm - (RD-C-5 /2)-Z6-C052-ST | 2d | 2026-08-24 | 2026-08-25 | RHD4CZ6C052ST2101 |
| RHD4CZ6C052ST2301 |  | Installing for UPVC Pipe Line 400 mm - (RD-C-5 /2)-Z6-C052-ST | 2d | 2026-08-26 | 2026-08-27 | RHD4CZ6C052ST2201, RHD4PRSHLDOSST1105, RHD4PRSHLSTAGST1105, RHD4CZ6C052ST7300, RHD4CZ6C052ST8300 |
| RHD4CZ6C052ST2401 |  | Primary Test for UPVC Pipe Line 400 mm - (RD-C-5 /2)-Z6-C052-ST | 2d | 2026-08-29 | 2026-08-30 | RHD4CZ6C052ST2301 |
| RHD4CZ6C052ST2501 |  | Backfilling and warning tape works for UPVC Pipe Line 400 mm - (RD-C-5 /2)-Z6-C052-ST | 2d | 2026-09-03 | 2026-09-05 | RHD4CZ6C052ST2401, RHD4CZ6C052ST6100, RHD4CZ6C052ST1500 |
|  | 4885 | **RHD4-02-002-C052-(ST)-UPVC Pipes - 300 mm diameter** |  | 2026-08-24 | 2026-09-09 |  |
| RHD4CZ6C052ST2100 |  | Excavation works for UPVC Pipe Line 300 mm - (RD-C-5 /2)-Z6-C052-ST | 3d | 2026-08-24 | 2026-08-26 | RHD4CZ6C052ST3300, RHD4CZ6C052ST3301, RHD4CZ6C052ST2101, RHD4ENSDZ6APPST110 |
| RHD4CZ6C052ST2200 |  | Bedding works for UPVC Pipe Line 300 mm - (RD-C-5 /2)-Z6-C052-ST | 3d | 2026-08-27 | 2026-08-30 | RHD4CZ6C052ST2100 |
| RHD4CZ6C052ST2300 |  | Installing for UPVC Pipe Line 300 mm - (RD-C-5 /2)-Z6-C052-ST | 3d | 2026-08-31 | 2026-09-02 | RHD4CZ6C052ST2200, RHD4CZ6C052ST2301, RHD4PRSHLDOSST1105, RHD4PRSHLSTAGST1105, RHD4CZ6C052ST7300, RHD4CZ6C052ST8300 |
| RHD4CZ6C052ST2400 |  | Primary Test for UPVC Pipe Line 300 mm - (RD-C-5 /2)-Z6-C052-ST | 2d | 2026-09-03 | 2026-09-05 | RHD4CZ6C052ST2300 |
| RHD4CZ6C052ST2500 |  | Backfilling and warning tape works for UPVC Pipe Line 300 mm - (RD-C-5 /2)-Z6-C052-ST | 4d | 2026-09-06 | 2026-09-09 | RHD4CZ6C052ST2400, RHD4CZ6C052ST6100, RHD4CZ6C052ST2501 |
|  | 4893 | **RHD4-02-002-C052-(ST)-Concrete Encasement** |  | 2026-09-01 | 2026-09-02 |  |
| RHD4CZ6C052ST6100 |  | Pipe Encasement for Storm Pipelines - (RD-C-5 /2)-Z6-C052-ST | 2d | 2026-09-01 | 2026-09-02 | RHD4CZ6C052ST2301 SS, RHD4CZ6C052ST2300 SS, RHD4CZ6C052ST2300 FF, RHD4CZ6C052ST2301 FF, RHD4CZ6C052ST2201, RHD4CZ6C052ST2200 |
|  | 4894 | **RHD4-02-002-Z6-C052-Catch Basin - ST** |  | 2026-08-06 | 2026-09-03 |  |
|  | 4895 | **RHD4-02-002-C052-(ST)-Single Catch Basin Works** |  | 2026-08-06 | 2026-09-03 |  |
| RHD4CZ6C052ST7100 |  | Excavation works for Single Catch Basin - (RD-C-5 /2)-Z6-C052-ST | 4d | 2026-08-06 | 2026-08-10 | RHD4CZ6C052ST3300, RHD4CZ6C052ST3301, RHD4ENSDZ6APPST110 |
| RHD4CZ6C052ST7200 |  | PC Blinding, Installation and Pipe connection for Single Catch Basin - (RD-C-5 /2)-Z6-C052-ST | 4d | 2026-08-11 | 2026-08-15 | RHD4CZ6C052ST7100 |
| RHD4CZ6C052ST7300 |  | Rings & C.Slab & Final Backfill for Single Catch Basin - (RD-C-5 /2)-Z6-C052-ST | 5d | 2026-08-16 | 2026-08-20 | RHD4CZ6C052ST7200, RHD4PRSHLDOSST1305, RHD4PRSHLSTAGST1305 |
| RHD4CZ6C052ST7400 |  | Steel Cover for Single Catch Basin - (RD-C-5 /2)-Z6-C052-ST | 4d | 2026-08-22 | 2026-08-25 | RHD4CZ6C052ST7300, RHD4PRSHLDOSST1705 |
| RHD4CZ6C052ST7500 |  | Finishing and Insulation works for Single Catch Basin - (RD-C-5 /2)-Z6-C052-ST | 8d | 2026-08-26 | 2026-09-03 | RHD4CZ6C052ST7400 |
|  | 4896 | **RHD4-02-002-C052-(ST)-Double Catch Basin Works** |  | 2026-08-11 | 2026-08-30 |  |
| RHD4CZ6C052ST8100 |  | Excavation works for Double Catch Basin - (RD-C-5 /2)-Z6-C052-ST | 2d | 2026-08-11 | 2026-08-12 | RHD4CZ6C052ST3300, RHD4CZ6C052ST3301, RHD4CZ6C052ST7100, RHD4ENSDZ6APPST110 |
| RHD4CZ6C052ST8200 |  | PC Blinding, Installation and Pipe connection for Double Catch Basin - (RD-C-5 /2)-Z6-C052-ST | 2d | 2026-08-13 | 2026-08-15 | RHD4CZ6C052ST8100 |
| RHD4CZ6C052ST8300 |  | Rings & C.Slab & Final Backfillfor Double Catch Basin - (RD-C-5 /2)-Z6-C052-ST | 2d | 2026-08-16 | 2026-08-17 | RHD4CZ6C052ST8200, RHD4PRSHLDOSST1305, RHD4PRSHLSTAGST1305 |
| RHD4CZ6C052ST8400 |  | Steel Cover for Double Catch Basin - (RD-C-5 /2)-Z6-C052-ST | 2d | 2026-08-26 | 2026-08-27 | RHD4CZ6C052ST8300, RHD4PRSHLDOSST1705, RHD4CZ6C052ST7400 |
| RHD4CZ6C052ST8500 |  | Finishing and Insulation works for Double Catch Basin - (RD-C-5 /2)-Z6-C052-ST | 2d | 2026-08-29 | 2026-08-30 | RHD4CZ6C052ST8400 |
|  | 4299 | **RHD4-02-002-Z6-C052-Concrete Box Culvert - ST** |  | 2026-09-06 | 2026-12-05 |  |
|  | 4300 | **RHD4-02-002-C052-(ST)-Concrete Box Culvert** |  | 2026-09-06 | 2026-12-05 |  |
| RHD4CZ6C052ST4100 |  | Excavation works for Box Culvert - (RD-C-5/2)-Z6-C052-ST(Completed) | 46d | 2026-09-06 | 2026-10-29 | RHD4CZ6C052RD1100 |
| RHD4CZ6C052ST4200 |  | PC works for Box Culvert - (RD-C-5/2)-Z6-C052-ST(Completed) | 43d | 2026-09-06 | 2026-10-26 | RHD4CZ6C052ST4100 SS |
| RHD4CZ6C052ST4400 |  | Raft works for Box Culvert - (RD-C-5/2)-Z6-C052-ST(Completed) | 21d | 2026-09-06 | 2026-09-30 | RHD4CZ6C052ST4200 SS |
| RHD4CZ6C052ST4500 |  | Wall and slab works for Box Culvert - (RD-C-5/2)-Z6-C052-ST | 5d | 2026-10-31 | 2026-11-04 | RHD4CZ6C052ST4400, RHD4CZ6C052ST4200, RHD4CZ6C052RD1100, RHD4CZ6C052ST4100 |
| RHD4CZ6C052ST4700 |  | Backfilling works for Box Culvert - (RD-C-5/2)-Z6-C052-ST | 13d | 2026-11-16 | 2026-11-30 | RHD4CZ6C052ST4500, RHD4CZ6C052ST5300 |
| RHD4CZ6C052ST4600 |  | Insulation and Testing for Box Culvert - (RD-C-5/2)-Z6-C052-ST | 4d | 2026-12-01 | 2026-12-05 | RHD4CZ6C052ST4700, RHD4CZ6C052ST5400 |
|  | 4301 | **RHD4-02-002-C052-(ST)-Concrete Chambers** |  | 2026-11-05 | 2026-11-18 |  |
| RHD4CZ6C052ST5100 |  | Excavation and Bedding for Concrete Chambers - for Box Culvert - (RD-C-5/2)-Z6-C052-ST | 3d | 2026-11-05 | 2026-11-08 | RHD4CZ6C052ST4500 |
| RHD4CZ6C052ST5200 |  | PC works for Concrete Chambers - for Box Culvert - (RD-C-5/2)-Z6-C052-ST | 3d | 2026-11-09 | 2026-11-11 | RHD4CZ6C052ST5100 |
| RHD4CZ6C052ST5300 |  | Installation for Concrete Chambers - for Box Culvert - (RD-C-5/2)-Z6-C052-ST | 3d | 2026-11-12 | 2026-11-15 | RHD4CZ6C052ST5200 |
| RHD4CZ6C052ST5400 |  | Backfilling works for Concrete Chambers - for Box Culvert - (RD-C-5/2)-Z6-C052-ST | 3d | 2026-11-16 | 2026-11-18 | RHD4CZ6C052ST5300 |

| ID | WBS | Task | Duration | Start | Finish | Predecessors |
| --- | --- | --- | --- | --- | --- | --- |
|  | 4919 | **RHD4-02-002-Z6-C052-Sewage Network - SW** |  | 2026-08-27 | 2026-09-22 |  |
|  | 4929 | **RHD4-02-002-C052-(SW)-MH Works - 1200 mm diameter** |  | 2026-08-27 | 2026-09-22 |  |
| RHD4CZ6C052SW3100 |  | Excavation and PC Blinding works for MH 1200 mm - (RD-C-5 /2)-Z6-C052-SW | 5d | 2026-08-27 | 2026-09-01 | RHD4ENSDZ6APPSW120, RHD4CZ6C052ST1503, RHD4CZ6C052ST2100 |
| RHD4CZ6C052SW3200 |  | Installation of Base for MH 1200 mm - (RD-C-5 /2)-Z6-C052-SW | 5d | 2026-09-02 | 2026-09-07 | RHD4CZ6C052SW3100 |
| RHD4CZ6C052SW3300 |  | MH Ring and C.Slab works and Backfilling works for MH 1200 mm - (RD-C-5 /2)-Z6-C052-SW | 5d | 2026-09-08 | 2026-09-13 | RHD4CZ6C052SW3200, RHD4PRSHLDOSSW1305, RHD4PRSHLSTAGSW1305 |
| RHD4CZ6C052SW3400 |  | Steel Cover for MH 1200 mm - (RD-C-5 /2)-Z6-C052-SW | 3d | 2026-09-14 | 2026-09-16 | RHD4CZ6C052SW3300, RHD4PRSHLDOSSW1405, RHD4PRSHLSTAGSW1405 |
| RHD4CZ6C052SW3500 |  | Finishing, Benching, Testing works for MH 1200 mm - (RD-C-5 /2)-Z6-C052-SW | 5d | 2026-09-17 | 2026-09-22 | RHD4CZ6C052SW3400 |
|  | 4925 | **RHD4-02-002-C052-(SW)-UPVC Pipes - 200 mm diameter** |  | 2026-09-08 | 2026-09-22 |  |
| RHD4CZ6C052SW2100 |  | Excavation works for UPVC Pipe Line 200 mm - (RD-C-5 /2)-Z6-C052-SW | 2d | 2026-09-08 | 2026-09-09 | RHD4CZ6C052SW3200, RHD4ENSDZ6APPSW120 |
| RHD4CZ6C052SW2200 |  | Bedding works for UPVC Pipe Line 200 mm - (RD-C-5 /2)-Z6-C052-SW | 2d | 2026-09-10 | 2026-09-12 | RHD4CZ6C052SW2100 |
| RHD4CZ6C052SW2300 |  | Installing for UPVC Pipe Line 200 mm - (RD-C-5 /2)-Z6-C052-SW | 3d | 2026-09-14 | 2026-09-16 | RHD4CZ6C052SW2200, RHD4CZ6C052SW3300, RHD4PRSHLSTAGSW1005, RHD4PRSHLDOSSW1305, RHD4PRSHLPOSW1000, RHD4PRSHLDOSSW1005, RHD4PRSHLDOSSW1004, RHD4PRSHLDOSSW1304, RHD4PRSHLPOSW1100, RHD4PRSHLDOSSW1104 |
| RHD4CZ6C052SW2400 |  | Primary Test for UPVC Pipe Line 200 mm - (RD-C-5 /2)-Z6-C052-SW | 2d | 2026-09-17 | 2026-09-19 | RHD4CZ6C052SW2300 |
| RHD4CZ6C052SW2500 |  | Backfilling and warning tape works for UPVC Pipe Line 200 mm - (RD-C-5 /2)-Z6-C052-SW | 3d | 2026-09-20 | 2026-09-22 | RHD4CZ6C052SW2400 |
|  | 4928 | **RHD4-02-002-C052-(SW)-Concrete Encasement** |  |  |  |  |
|  | 4956 | **RHD4-02-002-Z6-C052-Potable Network - PT** |  | 2026-09-24 | 2026-10-22 |  |
|  | 4957 | **RHD4-02-002-C052-(PT)-HDPE Pipes - 110 mm diameter** |  | 2026-09-27 | 2026-10-11 |  |
| RHD4CZ6C052PT1100 |  | Excavation works for HDPE Pipline 110 mm - (RD-C-5 /2)-Z6-C052-PT | 2d | 2026-09-27 | 2026-09-28 | RHD4CZ6C052PT1101, RHD4CZ6C052SW2500, RHD4ENSDZ6APPPT130, RHD4ENMSPT2000 |
| RHD4CZ6C052PT1200 |  | Bedding works for HDPE Pipline 110 mm - (RD-C-5 /2)-Z6-C052-PT | 2d | 2026-09-29 | 2026-09-30 | RHD4CZ6C052PT1100, RHD4CZ6C052PT1201 |
| RHD4CZ6C052PT1300 |  | Installing for HDPE Pipline 110 mm - (RD-C-5 /2)-Z6-C052-PT | 2d | 2026-10-03 | 2026-10-04 | RHD4CZ6C052PT1200, RHD4CZ6C052PT1301, RHD4PRSHLDOSPT1000, RHD4PRSHLSTAGPT1000 |
| RHD4CZ6C052PT1400 |  | Primary Test for HDPE Pipline 110 mm - (RD-C-5 /2)-Z6-C052-PT | 2d | 2026-10-07 | 2026-10-08 | RHD4CZ6C052PT1300, RHD4CZ6C052PT1401, RHD4CZ6C052PT5100 |
| RHD4CZ6C052PT1500 |  | Backfilling and warning tape works for HDPE Pipline 110 mm - (RD-C-5 /2)-Z6-C052-PT | 2d | 2026-10-10 | 2026-10-11 | RHD4CZ6C052PT1400, RHD4CZ6C052PT1501 |
|  | 3643 | **RHD4-02-002-C052-(PT)-Air Valve Chambers** |  | 2026-09-29 | 2026-10-07 |  |
| RHD4CZ6C052PT2102 |  | Excavation and Bedding for Air Valve Chambers for Potable Water Network - (RD-C-5 /2)-Z6-C052-PT | 2d | 2026-09-29 | 2026-09-30 | RHD4CZ6C052PT2101 SS |
| RHD4CZ6C052PT2202 |  | PC works for Air Valve Chambers for Potable Water Network - (RD-C-5 /2)-Z6-C052-PT | 2d | 2026-10-01 | 2026-10-03 | RHD4CZ6RA01RD3100, RHD4CZ6C052PT2102 |
| RHD4CZ6C052PT2302 |  | Installation for Air Valve Chambers for Potable Water Network - (RD-C-5 /2)-Z6-C052-PT | 2d | 2026-10-04 | 2026-10-05 | RHD4CZ6C052PT2202 |
| RHD4CZ6C052PT2402 |  | Backfilling works for Air Valve Chambers for Potable Water Network - (RD-C-5 /2)-Z6-C052-PT | 2d | 2026-10-06 | 2026-10-07 | RHD4CZ6C052PT2302 |
|  | 3644 | **RHD4-02-002-C052-(PT)-Air Valves** |  | 2026-10-06 | 2026-10-10 |  |
| RHD4CZ6C052PT3103 |  | Installation for Air Valves for Potable Water Network - (RD-C-5 /2)-Z6-C052-PT | 2d | 2026-10-06 | 2026-10-07 | RHD4CZ6C052PT2302 |
| RHD4CZ6C052PT3203 |  | Stem and Service box for Air Valves for Potable Water Network - (RD-C-5 /2)-Z6-C052-PT | 2d | 2026-10-08 | 2026-10-10 | RHD4CZ6C052PT3103, RHD4CZ6C052PT2402 |
|  | 4962 | **RHD4-02-002-C052-(PT)-Gate Valves (Direct Buried)** |  | 2026-10-03 | 2026-10-13 |  |
| RHD4CZ6C052PT3100 |  | Installation for Direct Buried Gate Valves - (RD-C-5 /2)-Z6-C052-PT | 2d | 2026-10-03 | 2026-10-04 | RHD4CZ6C052PT1301 FF, RHD4CZ6C052PT1300 FF, RHD4CZ6C052PT1301 SS, RHD4CZ6C052PT1300 SS, RHD4PRSHLDOSPT1200, RHD4PRSHLSTAGPT1200 |
| RHD4CZ6C052PT3200 |  | Stem and Service box for Direct Buried Gate Valves - (RD-C-5 /2)-Z6-C052-PT | 2d | 2026-10-12 | 2026-10-13 | RHD4CZ6C052PT3100, RHD4CZ6C052PT1501, RHD4CZ6C052PT1500, RHD4PRSHLDOSPT1300, RHD4PRSHLSTAGPT1300 |
|  | 4965 | **RHD4-02-002-C052-(PT)-Wash out Valve Chambers** |  | 2026-09-29 | 2026-10-07 |  |
| RHD4CZ6C052PT2101 |  | Excavation and Bedding for Wash out Valve Chambers for Potable Water Network - (RD-C-5 /2)-Z6-C052-PT | 2d | 2026-09-29 | 2026-09-30 | RHD4ENSDZ6APPPT130, RHD4CZ6C052PT1100 |
| RHD4CZ6C052PT2201 |  | PC works for Wash out Valve Chambers for Potable Water Network - (RD-C-5 /2)-Z6-C052-PT | 2d | 2026-10-01 | 2026-10-03 | RHD4CZ6C052PT2101 |
| RHD4CZ6C052PT2301 |  | Installation for Wash out Valve Chambers for Potable Water Network - (RD-C-5 /2)-Z6-C052-PT | 2d | 2026-10-04 | 2026-10-05 | RHD4CZ6C052PT2201, RHD4PRSHLDOSPT1100, RHD4PRSHLDOSPT1400, RHD4PRSHLSTAGPT1100, RHD4PRSHLSTAGPT1400 |
| RHD4CZ6C052PT2401 |  | Backfilling works for Wash out Valve Chambers for Potable Water Network - (RD-C-5 /2)-Z6-C052-PT | 2d | 2026-10-06 | 2026-10-07 | RHD4CZ6C052PT2301 |
|  | 4966 | **RHD4-02-002-C052-(PT)-Wash out Valves** |  | 2026-10-06 | 2026-10-10 |  |
| RHD4CZ6C052PT3102 |  | Installation for Wash out Valves for Potable Water Network - (RD-C-5 /2)-Z6-C052-PT | 2d | 2026-10-06 | 2026-10-07 | RHD4CZ6C052PT2301, RHD4PRSHLDOSPT1200, RHD4PRSHLSTAGPT1200 |
| RHD4CZ6C052PT3202 |  | Stem and Service box for Wash out Valves for Potable Water Network - (RD-C-5 /2)-Z6-C052-PT | 2d | 2026-10-08 | 2026-10-10 | RHD4CZ6C052PT3102, RHD4CZ6C052PT2401, RHD4PRSHLDOSPT1300, RHD4PRSHLSTAGPT1300 |
|  | 4969 | **RHD4-02-002-C052-(PT)-Fire Hydrant** |  | 2026-10-12 | 2026-10-22 |  |
| RHD4CZ6C052PT4100 |  | Excavation and Bedding and Pipe Installation for Fire Hydrant - (RD-C-5 /2)-Z6-C052-PT | 2d | 2026-10-12 | 2026-10-13 | RHD4CZ6C052PT1501, RHD4CZ6C052PT1500, RHD4ENSDZ6APPPT130 |
| RHD4CZ6C052PT4200 |  | Valve Installation for Fire Hydrant - (RD-C-5 /2)-Z6-C052-PT | 2d | 2026-10-14 | 2026-10-15 | RHD4CZ6C052PT4100 |
| RHD4CZ6C052PT4300 |  | Stem for Fire Hydrant - (RD-C-5 /2)-Z6-C052-PT | 2d | 2026-10-17 | 2026-10-18 | RHD4CZ6C052PT4200 |
| RHD4CZ6C052PT4400 |  | Fire Installation for Fire Hydrant - (RD-C-5 /2)-Z6-C052-PT | 2d | 2026-10-19 | 2026-10-20 | RHD4CZ6C052PT4300, RHD4PRSHLDOSPT1500, RHD4PRSHLSTAGPT1500 |
| RHD4CZ6C052PT4500 |  | Protection Barriers for Fire Hydrant - (RD-C-5 /2)-Z6-C052-PT | 2d | 2026-10-21 | 2026-10-22 | RHD4CZ6C052PT4400 |
|  | 4970 | **RHD4-02-002-C052-(PT)-Concrete Encasement** |  | 2026-10-03 | 2026-10-04 |  |
| RHD4CZ6C052PT5100 |  | Pipe Encasement for Potable Pipelines - (RD-C-5 /2)-Z6-C052-PT | 2d | 2026-10-03 | 2026-10-04 | RHD4CZ6C052PT1301 FF, RHD4CZ6C052PT1300 FF, RHD4CZ6C052PT1301 SS, RHD4CZ6C052PT1300 SS, RHD4CZ6C052PT1201, RHD4CZ6C052PT1200 |
|  | 4958 | **RHD4-02-002-C052-(PT)-HDPE Pipes - 160 mm diameter** |  | 2026-09-24 | 2026-10-08 |  |
| RHD4CZ6C052PT1101 |  | Excavation works for HDPE Pipline 160 mm - (RD-C-5 /2)-Z6-C052-PT | 2d | 2026-09-24 | 2026-09-26 | RHD4CZ6C052SW2500, RHD4ENSDZ6APPPT130, RHD4ENMSPT2000 |
| RHD4CZ6C052PT1201 |  | Bedding works for HDPE Pipline 160 mm - (RD-C-5 /2)-Z6-C052-PT | 2d | 2026-09-27 | 2026-09-28 | RHD4CZ6C052PT1101 |
| RHD4CZ6C052PT1301 |  | Installing for HDPE Pipline 160 mm - (RD-C-5 /2)-Z6-C052-PT | 3d | 2026-09-29 | 2026-10-01 | RHD4CZ6C052PT1201, RHD4PRSHLDOSPT1000, RHD4PRSHLSTAGPT1000 |
| RHD4CZ6C052PT1401 |  | Primary Test for HDPE Pipline 160 mm - (RD-C-5 /2)-Z6-C052-PT | 2d | 2026-10-05 | 2026-10-06 | RHD4CZ6C052PT1301, RHD4CZ6C052PT5100, RHD4CZ6C052PT3100 |
| RHD4CZ6C052PT1501 |  | Backfilling and warning tape works for HDPE Pipline 160 mm - (RD-C-5 /2)-Z6-C052-PT | 2d | 2026-10-07 | 2026-10-08 | RHD4CZ6C052PT1401 |
|  | 4971 | **RHD4-02-002-Z6-C052-Irrigation Network - IRR** |  | 2026-10-14 | 2026-11-03 |  |
|  | 4972 | **RHD4-02-002-C052-(IRR)-HDPE Pipes - 160 mm diameter** |  | 2026-10-14 | 2026-11-01 |  |
| RHD4CZ6C052IRR1100 |  | Excavation works for HDPE Pipline 160 mm - (RD-C-5 /2)-Z6-C052-IRR | 4d | 2026-10-14 | 2026-10-18 | RHD4CZ6C052PT1101, RHD4CZ6C052PT1100, RHD4ENSDZ6APPIRR140, RHD4ENMSRR2000, RHD4CZ6C052PT4100 |
| RHD4CZ6C052IRR1200 |  | Bedding works for HDPE Pipline 160 mm - (RD-C-5 /2)-Z6-C052-IRR | 3d | 2026-10-19 | 2026-10-21 | RHD4CZ6C052IRR1100 |
| RHD4CZ6C052IRR1300 |  | Installing for HDPE Pipline 160 mm - (RD-C-5 /2)-Z6-C052-IRR | 4d | 2026-10-22 | 2026-10-26 | RHD4CZ6C052IRR1200, RHD4PRSHLDOSIRR1000, RHD4PRSHLSTAGIRR1000 |
| RHD4CZ6C052IRR1400 |  | Primary Test for HDPE Pipline 160 mm - (RD-C-5 /2)-Z6-C052-IRR | 2d | 2026-10-27 | 2026-10-28 | RHD4CZ6C052IRR1300 |
| RHD4CZ6C052IRR1500 |  | Backfilling and warning tape works for HDPE Pipline 160 mm - (RD-C-5 /2)-Z6-C052-IRR | 3d | 2026-10-29 | 2026-11-01 | RHD4CZ6C052IRR1400 |
|  | 6685 | **RHD4-02-002-C052-(IRR)-Wash out Chamber** |  | 2026-10-14 | 2026-10-22 |  |
| RHD4CZ6C052IRR2101 |  | Excavation and Bedding for Wash out Chamber for Irrigation Network - (RD-C-5 /2)-Z6-C052-IRR | 2d | 2026-10-14 | 2026-10-15 | RHD4CZ6C052IRR1100 SS |
| RHD4CZ6C052IRR2201 |  | PC works for Wash out Chamber for Irrigation Network - (RD-C-5 /2)-Z6-C052-IRR | 2d | 2026-10-17 | 2026-10-18 | RHD4CZ6C052IRR2101 |
| RHD4CZ6C052IRR2301 |  | Installation for Wash out Chamber for Irrigation Network - (RD-C-5 /2)-Z6-C052-IRR | 2d | 2026-10-19 | 2026-10-20 | RHD4CZ6C052IRR2201 |
| RHD4CZ6C052IRR2401 |  | Backfilling works for Wash out Chamber for Irrigation Network - (RD-C-5 /2)-Z6-C052-IRR | 2d | 2026-10-21 | 2026-10-22 | RHD4CZ6C052IRR2301 |
|  | 6686 | **RHD4-02-002-C052-(IRR)-Wash out Valves** |  | 2026-10-21 | 2026-10-25 |  |
| RHD4CZ6C052IRR3102 |  | Installation for Wash out Valve for Irrigation Network - (RD-C-5 /2)-Z6-C052-IRR | 2d | 2026-10-21 | 2026-10-22 | RHD4CZ6C052IRR2301 |
| RHD4CZ6C052IRR3202 |  | Stem and Service box for Wash out Valve for Irrigation Network - (RD-C-5 /2)-Z6-C052-IRR | 2d | 2026-10-24 | 2026-10-25 | RHD4CZ6C052IRR3102, RHD4CZ6C052IRR2401 |
|  | 4980 | **RHD4-02-002-C052-(IRR)-Gate Valves (Direct Buried)** |  | 2026-10-22 | 2026-11-03 |  |

| ID | WBS | Task | Duration | Start | Finish | Predecessors |
| --- | --- | --- | --- | --- | --- | --- |
| RHD4CZ6C052IRR3100 |  | Installation for Direct Buried Gate Valves - (RD-C-5 /2)-Z6-C052-IRR | 2d | 2026-10-22 | 2026-10-24 | RHD4CZ6C052IRR1300 SS, RHD4PRSHLDOSIRR1100, RHD4PRSHLSTAGIRR1100 |
| RHD4CZ6C052IRR3200 |  | Stem and Service box for Direct Buried Gate Valves - (RD-C-5 /2)-Z6-C052-IRR | 2d | 2026-11-02 | 2026-11-03 | RHD4CZ6C052IRR3100, RHD4CZ6C052IRR1500, RHD4PRSHLDOSIRR1300, RHD4PRSHLSTAGIRR1300 |
|  | 5005 | **RHD4-02-002-Z6-C052-Medium Voltage Network - MV** |  | 2026-09-08 | 2026-12-17 |  |
|  | 5006 | **RHD4-02-002-C052-(MV)-Medium Voltage cable trench** |  | 2026-11-07 | 2026-11-17 |  |
| RHD4CZ6C052MV1100 |  | Excavation for Medium Voltage Trench - (RD-C-5 /2)-Z6-C052-MV | 5d | 2026-11-07 | 2026-11-11 | RHD4ENSDZ6APPMV150, RHD4CZ6C052RD3100, RHD4CZ6C062MV3401 |
| RHD4CZ6C052MV1200 |  | Trench Backfilling for Medium Voltage Network - (RD-C-5 /2)-Z6-C052-MV | 5d | 2026-11-12 | 2026-11-17 | RHD4CZ6C052MV1100 |
|  | 5007 | **RHD4-02-002-C052-(MV)-Medium Voltage duct banks** |  | 2026-09-08 | 2026-09-16 |  |
| RHD4CZ6C052MV2100 |  | Excavation of Duct Banks for Medium Voltage Network - (RD-C-5 /2)-Z6-C052-MV | 2d | 2026-09-08 | 2026-09-09 | RHD4ENSDZ6APPMV150, RHD4CZ6C052SW3200 |
| RHD4CZ6C052MV2200 |  | Installation of Duct Banks for Medium Voltage Network - (RD-C-5 /2)-Z6-C052-MV | 2d | 2026-09-10 | 2026-09-12 | RHD4CZ6C052MV2100, RHD4PRSHLDOSMV1000, RHD4PRSHLSTAGMV1000 SS |
| RHD4CZ6C052MV2300 |  | Pouring of Duct Banks for Medium Voltage Network - (RD-C-5 /2)-Z6-C052-MV | 2d | 2026-09-13 | 2026-09-14 | RHD4CZ6C052MV2200 |
| RHD4CZ6C052MV2400 |  | Backfilling of Duct Banks for Medium Voltage Network - (RD-C-5 /2)-Z6-C052-MV | 2d | 2026-09-15 | 2026-09-16 | RHD4CZ6C052MV2300 |
|  | 5008 | **RHD4-02-002-C052-(MV)-Medium Voltage cables 3Cx 500 mm²** |  | 2026-11-12 | 2026-12-17 |  |
| RHD4CZ6C052MV3100 |  | Installation of Medium Voltage Cables 3Cx 500 mm² - (RD-C-5 /2)-Z6-C052-MV | 20d | 2026-11-12 | 2026-12-05 | RHD4CZ6C052MV1100, RHD4PRSHLDOSMV1100, RHD4ENMSMV2000, RHD4ENMSMV2010, RHD4PRSHLSTAGMV1100 |
| RHD4CZ6C052MV3200 |  | Joints Installation of Medium Voltage Cables 3Cx 500 mm² - (RD-C-5 /2)-Z6-C052-MV | 3d | 2026-12-06 | 2026-12-08 | RHD4CZ6C052MV3100, RHD4PRSHLDOSMV1300, RHD4PRSHLSTAGMV1300 |
| RHD4CZ6C052MV3300 |  | Testing of Medium Voltage Cables 3Cx 500 mm² - (RD-C-5 /2)-Z6-C052-MV | 6d | 2026-12-09 | 2026-12-15 | RHD4CZ6C052MV3200, RHD4CZ6C052MV1200, RHD4CZ6C052MV4200 |
| RHD4CZ6C052MV3400 |  | Termination of Medium Voltage Cables 3Cx 500 mm² - (RD-C-5 /2)-Z6-C052-MV | 2d | 2026-12-16 | 2026-12-17 | RHD4CZ6C052MV3300 |
|  | 5009 | **RHD4-02-002-C052-(MV)-Medium Voltage cables 3Cx 50 mm²** |  | 2026-12-16 | 2026-12-17 |  |
| RHD4CZ6C052MV3401 |  | Termination of Medium Voltage Cables 3Cx 50 mm² - (RD-C-5 /2)-Z6-C052-MV | 2d | 2026-12-16 | 2026-12-17 | RHD4CZ6C052MV3400 SS, RHD4CZ6C052MV3300 |
|  | 5010 | **RHD4-02-002-C052-(MV)-Normally open Point (Outdoor Type)** |  | 2026-12-03 | 2026-12-07 |  |
| RHD4CZ6C052MV4100 |  | Installation for Normally open Point - (RD-C-5 /2)-Z6-C052-MV | 2d | 2026-12-03 | 2026-12-05 | RHD4CZ6C052MV3100 FF, RHD4PRSHLDOSMV1400, RHD4PRSHLSTAGMV1400 |
| RHD4CZ6C052MV4200 |  | Termination for Normally open Point - (RD-C-5 /2)-Z6-C052-MV | 2d | 2026-12-06 | 2026-12-07 | RHD4CZ6C052MV4100 |
|  | 5012 | **RHD4-02-002-Z6-C052-Low Voltage Network - LV** |  | 2026-09-10 | 2026-11-09 |  |
|  | 5013 | **RHD4-02-002-C052-(LV)-Low Voltage duct banks** |  | 2026-09-10 | 2026-09-19 |  |
| RHD4CZ6C052LV2100 |  | Excavation of Duct Banks for Low Voltage Network - (RD-C-5 /2)-Z6-C052-LV | 2d | 2026-09-10 | 2026-09-12 | RHD4CZ6C052RW3000, RHD4ENSDZ6APPLV160, RHD4CZ6C052MV2100 |
| RHD4CZ6C052LV2200 |  | Installation of Duct Banks for Low Voltage Network - (RD-C-5 /2)-Z6-C052-LV | 2d | 2026-09-13 | 2026-09-14 | RHD4CZ6C052LV2100 |
| RHD4CZ6C052LV2300 |  | Pouring of Duct Banks for Low Voltage Network - (RD-C-5 /2)-Z6-C052-LV | 2d | 2026-09-15 | 2026-09-16 | RHD4CZ6C052LV2200 |
| RHD4CZ6C052LV2400 |  | Backfilling of Duct Banks for Low Voltage Network - (RD-C-5 /2)-Z6-C052-LV | 2d | 2026-09-17 | 2026-09-19 | RHD4CZ6C052LV2300 |
|  | 5014 | **RHD4-02-002-C052-(LV)-Low Voltage Drawpit** |  | 2026-10-26 | 2026-10-29 |  |
| RHD4CZ6C052LV5100 |  | Excavation of Drawpit size 900x900x1000mm for Low Voltage Network - (RD-C-5 /2)-Z6-C052-LV | 2d | 2026-10-26 | 2026-10-27 | RHD4CZ6C052LV2300, RHD4ENSDZ6APPLV160, RHD4CZ6C052IRR3202 |
| RHD4CZ6C052LV5200 |  | Installation of Drawpit size 900x900x1000mm for Low Voltage Network - (RD-C-5 /2)-Z6-C052-LV | 2d | 2026-10-28 | 2026-10-29 | RHD4CZ6C052LV5100, RHD4PRSHLDOSLV1400, RHD4PRSHLSTAGLV1400 |
|  | 5015 | **RHD4-02-002-C052-(LV)-Low Voltage cables** |  | 2026-10-31 | 2026-11-09 |  |
| RHD4CZ6C052LV3100 |  | Excavation for Low Voltage Cables for Low Voltage Network - (RD-C-5 /2)-Z6-C052-LV | 3d | 2026-10-31 | 2026-11-02 | RHD4ENSDZ6APPLV160, RHD4CZ6C052LV5200 |
| RHD4CZ6C052LV3200 |  | Cable Laying of Low Voltage Cables for Low Voltage Network - (RD-C-5 /2)-Z6-C052-LV | 2d | 2026-11-03 | 2026-11-04 | RHD4CZ6C052LV3100, RHD4PRSHLDOSLV1100, RHD4ENMSLV2000, RHD4ENMSLV2010, RHD4PRSHLSTAGLV1100 |
| RHD4CZ6C052LV3300 |  | Warning tape and Backfill for Low Voltage Cables for Low Voltage Network - (RD-C-5 /2)-Z6-C052-LV | 2d | 2026-11-05 | 2026-11-07 | RHD4CZ6C052LV3200 |
| RHD4CZ6C052LV3400 |  | Testing of Low Voltage Cables for Low Voltage Network - (RD-C-5 /2)-Z6-C052-LV | 2d | 2026-11-08 | 2026-11-09 | RHD4CZ6C052LV3300 |
|  | 5018 | **RHD4-02-002-Z6-C052-Street Lighting Network - SL** |  | 2026-11-04 | 2026-11-30 |  |
|  | 5019 | **RHD4-02-002-C052-(SL)-Street Lighting duct banks** |  | 2026-11-04 | 2026-11-12 |  |
| RHD4CZ6C052SL2100 |  | Excavation of Duct Banks for Street Lighting Network - (RD-C-5 /2)-Z6-C052-SL | 2d | 2026-11-04 | 2026-11-05 | RHD4CZ6C052LV2100, RHD4ENSDZ6APPSL170, RHD4CZ6C052IRR3200 |
| RHD4CZ6C052SL2200 |  | Installation of Duct Banks for Street Lighting Network - (RD-C-5 /2)-Z6-C052-SL | 2d | 2026-11-07 | 2026-11-08 | RHD4CZ6C052SL2100 |
| RHD4CZ6C052SL2300 |  | Pouring of Duct Banks for Street Lighting Network - (RD-C-5 /2)-Z6-C052-SL | 2d | 2026-11-09 | 2026-11-10 | RHD4CZ6C052SL2200 |
| RHD4CZ6C052SL2400 |  | Backfilling of Duct Banks for Street Lighting Network - (RD-C-5 /2)-Z6-C052-SL | 2d | 2026-11-11 | 2026-11-12 | RHD4CZ6C052SL2300, RHD4CZ6C052LV2400 |
|  | 5020 | **RHD4-02-002-C052-(SL)-Street Lighting Drawpit** |  | 2026-11-11 | 2026-11-15 |  |
| RHD4CZ6C052SL5100 |  | Excavation of Drawpit size 600x600x900mm for Street Lighting Network - (RD-C-5 /2)-Z6-C052-SL | 2d | 2026-11-11 | 2026-11-12 | RHD4CZ6C052SL2300, RHD4ENSDZ6APPSL170, RHD4CZ6C052LV3100 |
| RHD4CZ6C052SL5200 |  | Installation of Drawpit size 600x600x900mm for Street Lighting Network - (RD-C-5 /2)-Z6-C052-SL | 2d | 2026-11-14 | 2026-11-15 | RHD4CZ6C052SL5100, RHD4PRSHLDOSSL1400, RHD4PRSHLSTAGSL1400 |
|  | 5021 | **RHD4-02-002-C052-(SL)-Street Lighting cables** |  | 2026-11-16 | 2026-11-25 |  |
| RHD4CZ6C052SL3100 |  | Excavation for Street Lighting Cables for Street Lighting Network - (RD-C-5 /2)-Z6-C052-SL | 3d | 2026-11-16 | 2026-11-18 | RHD4ENSDZ6APPSL170, RHD4CZ6C052SL5200 |
| RHD4CZ6C052SL3200 |  | Cable Laying of Street Lighting Cables for Street Lighting Network - (RD-C-5 /2)-Z6-C052-SL | 2d | 2026-11-19 | 2026-11-21 | RHD4CZ6C052SL3100, RHD4PRSHLDOSSL1100, RHD4ENMSSL2000, RHD4ENMSSL2010, RHD4PRSHLSTAGSL1100 |
| RHD4CZ6C052SL3300 |  | Warning tape and Backfill for Street Lighting Cables for Street Lighting Network - (RD-C-5 /2)-Z6-C052-SL | 2d | 2026-11-22 | 2026-11-23 | RHD4CZ6C052SL3200 |
| RHD4CZ6C052SL3400 |  | Testing of Street Lighting Cables for Street Lighting Network - (RD-C-5 /2)-Z6-C052-SL | 2d | 2026-11-24 | 2026-11-25 | RHD4CZ6C052SL3300 |
|  | 5022 | **RHD4-02-002-C052-(SL)-Street Lighting Poles** |  | 2026-11-14 | 2026-11-30 |  |
| RHD4CZ6C052SL1100 |  | Excavation for RC Base for Lighting Poles for Street Lighting Network - (RD-C-5 /2)-Z6-C052-SL | 2d | 2026-11-14 | 2026-11-15 | RHD4CZ6C052SL2400, RHD4ENSDZ6APPSL170, RHD4CZ6C052SL5100 |
| RHD4CZ6C052SL1200 |  | Installation for RC Base for Lighting Poles for Street Lighting Network - (RD-C-5 /2)-Z6-C052-SL | 2d | 2026-11-16 | 2026-11-17 | RHD4CZ6C052SL1100 |
| RHD4CZ6C052SL1300 |  | Backfill for RC Base for Lighting Poles for Street Lighting Network - (RD-C-5 /2)-Z6-C052-SL | 2d | 2026-11-18 | 2026-11-19 | RHD4CZ6C052SL1200 |
| RHD4CZ6C052SL1400 |  | Installation for Lighting Poles for Street Lighting Network - (RD-C-5 /2)-Z6-C052-SL | 2d | 2026-11-26 | 2026-11-28 | RHD4CZ6C052SL1300, RHD4CZ6C052SL3400, RHD4PRSHLDOSSL1200, RHD4ENMSSL2000, RHD4ENMSSL2010, RHD4PRSHLSTAGSL1200, RHD4CZ6C052LV3400, RHD4CZ6C052LV5200 FF |
| RHD4CZ6C052SL1500 |  | Luminaire Installation for Lighting Poles for Street Lighting Network - (RD-C-5 /2)-Z6-C052-SL | 2d | 2026-11-29 | 2026-11-30 | RHD4CZ6C052SL1400, RHD4PRSHLDOSSL1300, RHD4PRSHLSTAGSL1300 |
|  | 5023 | **RHD4-02-002-C052-(SL)-Street Lighting Feeder Pillars** |  |  |  |  |
|  | 5024 | **RHD4-02-002-C052-(SL)-Street Lighting Earthing System** |  | 2026-11-29 | 2026-11-30 |  |
| RHD4CZ6C052SL6100 |  | Installation of Earthing for Lighting Poles and Fedder Pillers for Street Lighting Network - (RD-C-5 /2)-Z6-C052-SL | 2d | 2026-11-29 | 2026-11-30 | RHD4ENMSER2000, RHD4ENMSER2010, RHD4CZ6C052SL1400 |
|  | 5030 | **RHD4-02-002-Z6-C052-Telecommunications Network - TC** |  | 2026-07-25 | 2026-12-23 |  |
|  | 5031 | **RHD4-02-002-C052-(TC)-Telecommunications Ducts** |  | 2026-12-01 | 2026-12-23 |  |
| RHD4CZ6C052TC2100 |  | Excavation of HDPE Ducts for Telecom Network - (RD-C-5 /2)-Z6-C052-TC | 6d | 2026-12-01 | 2026-12-07 | RHD4ENSDZ6APPTC190, RHD4CZ6C052SL1500 |
| RHD4CZ6C052TC2200 |  | Installation of HDPE Ducts for Telecom Network - (RD-C-5 /2)-Z6-C052-TC | 8d | 2026-12-08 | 2026-12-16 | RHD4CZ6C052TC2100, RHD4PRSHLDOSTC1000, RHD4PRSHLSTAGTC1000 |
| RHD4CZ6C052TC2400 |  | Backfilling of HDPE Ducts for Telecom Network - (RD-C-5 /2)-Z6-C052-TC | 6d | 2026-12-17 | 2026-12-23 | RHD4CZ6C052TC2200, RHD4CZ6C052TC5200 |
|  | 5032 | **RHD4-02-002-C052-(TC)-Telecommunications Manholes** |  | 2026-12-08 | 2026-12-16 |  |
| RHD4CZ6C052TC5100 |  | Excavation for Manholes for Telecom Network - (RD-C-5 /2)-Z6-C052-TC | 4d | 2026-12-08 | 2026-12-12 | RHD4CZ6C052TC2100, RHD4ENSDZ6APPTC190 |
| RHD4CZ6C052TC5200 |  | Installation of Manholes for Telecom Network - (RD-C-5 /2)-Z6-C052-TC | 4d | 2026-12-13 | 2026-12-16 | RHD4CZ6C052TC5100, RHD4CZ6C052TC2200 SS, RHD4PRSHLDOSTC1200, RHD4PRSHLSTAGTC1200 |
|  | 5033 | **RHD4-02-002-C052-(TC)-Telecomminications Road Crossings** |  | 2026-07-25 | 2026-08-08 |  |
| RHD4CZ6C052TC3100 |  | Excavation for Road Crossings for Telecom Network - (RD-C-5 /2)-Z6-C052-TC | 2d | 2026-07-25 | 2026-07-26 | RHD4ENSDZ6APPTC190, RHD4CZ6C052ST1103 |
| RHD4CZ6C052TC3200 |  | Installation of Road Crossings for Telecom Network - (RD-C-5 /2)-Z6-C052-TC | 3d | 2026-07-30 | 2026-08-02 | RHD4CZ6C052TC3100, RHD4PRSHLDOSTC1100, RHD4PRSHLSTAGTC1100 |
| RHD4CZ6C052TC3300 |  | Pouring of Road Crossings for Telecom Network - (RD-C-5 /2)-Z6-C052-TC | 3d | 2026-08-03 | 2026-08-05 | RHD4CZ6C052TC3200 |

| ID | WBS | Task | Duration | Start | Finish | Predecessors |
| --- | --- | --- | --- | --- | --- | --- |
| RHD4CZ6C052TC3400 |  | Backfilling of Road Crossings for Telecom Network - (RD-C-5 /2)-Z6-C052-TC | 2d | 2026-08-06 | 2026-08-08 | RHD4CZ6C052TC3300 |
|  | 5034 | **RHD4-02-002-Z6-C052-Information and Communication Technologies - ICT** |  | 2026-07-27 | 2027-01-17 |  |
|  | 5035 | **RHD4-02-002-C052-(ICT)-Information and Communication Technologies Ducts** |  | 2026-12-24 | 2027-01-17 |  |
| RHD4CZ6C052ICT2100 |  | Excavation of HDPE Ducts for ICT Network - (RD-C-5 /2)-Z6-C052-ICT | 6d | 2026-12-24 | 2026-12-30 | RHD4ENSDZ6APPICT200, RHD4CZ6C052TC3100, RHD4CZ6C052TC2400 |
| RHD4CZ6C052ICT2200 |  | Installation of HDPE Ducts for ICT Network - (RD-C-5 /2)-Z6-C052-ICT | 9d | 2026-12-31 | 2027-01-10 | RHD4CZ6C052ICT2100, RHD4PRSHLDOSICT1000, RHD4PRSHLSTAGICT1000 |
| RHD4CZ6C052ICT2400 |  | Backfilling of HDPE Ducts for ICT Network - (RD-C-5 /2)-Z6-C052-ICT | 6d | 2027-01-11 | 2027-01-17 | RHD4CZ6C052ICT2200, RHD4CZ6C052ICT5200 |
|  | 5036 | **RHD4-02-002-C052-(ICT)-Information and Communication Technologies Manholes** |  | 2026-12-31 | 2027-01-06 |  |
| RHD4CZ6C052ICT5100 |  | Excavation for Manholes for ICT Network - (RD-C-5 /2)-Z6-C052-ICT | 3d | 2026-12-31 | 2027-01-03 | RHD4CZ6C052ICT2100, RHD4ENSDZ6APPICT200 |
| RHD4CZ6C052ICT5200 |  | Installation of Manholes for ICT Network - (RD-C-5 /2)-Z6-C052-ICT | 3d | 2027-01-04 | 2027-01-06 | RHD4CZ6C052ICT5100, RHD4PRSHLDOSICT1200, RHD4PRSHLSTAGICT1200 |
|  | 5037 | **RHD4-02-002-C052-(ICT)-Information and Communication Technologies Road Crossings** |  | 2026-07-27 | 2026-08-25 |  |
| RHD4CZ6C052ICT3100 |  | Excavation for Road Crossings for ICT Network - (RD-C-5 /2)-Z6-C052-ICT | 2d | 2026-07-27 | 2026-07-28 | RHD4ENSDZ6APPICT200, RHD4CZ6C052TC3100 |
| RHD4CZ6C052ICT3200 |  | Installation of Road Crossings for ICT Network - (RD-C-5 /2)-Z6-C052-ICT | 3d | 2026-08-17 | 2026-08-19 | RHD4CZ6C052ICT3100, RHD4PRSHLDOSICT1100, RHD4PRSHLSTAGICT1100 |
| RHD4CZ6C052ICT3300 |  | Pouring of Road Crossings for ICT Network - (RD-C-5 /2)-Z6-C052-ICT | 3d | 2026-08-20 | 2026-08-23 | RHD4CZ6C052ICT3200 |
| RHD4CZ6C052ICT3400 |  | Backfilling of Road Crossings for ICT Network - (RD-C-5 /2)-Z6-C052-ICT | 2d | 2026-08-24 | 2026-08-25 | RHD4CZ6C052ICT3300 |
|  | 5025 | **RHD4-02-002-Z6-C052-Landscape Network - LS** |  |  |  |  |
|  | 5026 | **RHD4-02-002-C052-(LS)-Landscape Lighting cables** |  |  |  |  |
|  | 5027 | **RHD4-02-002-C052-(LS)-Landscape Feeder Pillars** |  |  |  |  |
|  | 5028 | **RHD4-02-002-C052-(LS)-Landscape Bollard Poles** |  |  |  |  |
|  | 5029 | **RHD4-02-002-C052-(LS)-Landscape Feeder Pillars Earthing** |  |  |  |  |
|  | 5038 | **RHD4-02-002-Z6-C052-Security Network - CCTV** |  |  |  |  |
|  | 5039 | **RHD4-02-002-C052-(CCTV)-Civil Works** |  |  |  |  |
|  | 5055 | **RHD4-02-002-Z6-A02** |  | 2026-07-25 | 2027-01-25 |  |
|  | 5234 | **RHD4-02-002-Z6-A02-Road Works - RD** |  | 2026-08-10 | 2027-01-25 |  |
|  | 5235 | **RHD4-02-002-A02-(RD)-Subgrade** |  | 2026-08-10 | 2026-08-22 |  |
| RHD4CZ6A02RD1100 |  | Supply, lay and compaction subgrade compacted thickness 300 mm for Roads - (RD-A-2)-Z6-A02-RD | 11d | 2026-08-10 | 2026-08-22 | RHD4CZ6A02RW1000, RHD4CZ6A02ST1501, RHD4CZ6A02ST3300 |
|  | 5236 | **RHD4-02-002-A02-(RD)-Aggregate Base Course** |  | 2026-08-23 | 2026-08-24 |  |
| RHD4CZ6A02RD2100 |  | Supply, lay and compaction Aggregate base course compacted thickness 300 mmfor Roads - (RD-A-2)-Z6-A02-RD | 2d | 2026-08-23 | 2026-08-24 | RHD4PRSHLDOSRD1000, RHD4PRSHLSTAGRD1000, RHD4CZ6A02RD1100 |
|  | 5237 | **RHD4-02-002-A02-(RD)-Bituminous base course Two Layers, including (MC1)&(RC2)** |  | 2026-09-12 | 2027-01-12 |  |
| RHD4CZ6A02RD3100 |  | Supply, lay and Asphaltic base course including Prime Coat (MC1) for 1st Layer - (RD-A-2)-Z6-A02-RD | 2d | 2026-09-12 | 2026-09-13 | RHD4CZ6A02RD2100, RHD4PRSHLDOSRD1100, RHD4ENMSASPH2000, RHD4ENMSASPH2010, RHD4PRSHLSTAGRD1100, RHD4CZ6C052RD3100 |
| RHD4CZ6A02RD3200 |  | Supply, lay and Asphaltic base course including Tack Coat (RC2) for 2nd Layer - (RD-A-2)-Z6-A02-RD | 2d | 2027-01-11 | 2027-01-12 | RHD4PRSHLDOSRD1100, RHD4PRSHLSTAGRD1100, RHD4CZ6A02CCTV6100 |
|  | 5239 | **RHD4-02-002-A02-(RD)-Precast Concrete Curb** |  | 2027-01-13 | 2027-01-18 |  |
| RHD4CZ6A02RD5100 |  | Supply and installation Precast Concrete Kerb for Roads - (RD-A-2)-Z6-A02-RD | 5d | 2027-01-13 | 2027-01-18 | RHD4CZ6A02RD3200, RHD4PRSHLDOSRD1200, RHD4ENMSRD2000, RHD4ENMSRD2010 |
|  | 5242 | **RHD4-02-002-A02-(RD)-Traffic Signage** |  | 2027-01-19 | 2027-01-21 |  |
| RHD4CZ6A02RD8100 |  | Installation of Traffic Signage for Road Network - (RD-A-2)-Z6-A02-RD | 3d | 2027-01-19 | 2027-01-21 | RHD4CZ6A02RD5100 |
|  | 5240 | **RHD4-02-002-A02-(RD)-Precast Interlocking Block Pavers** |  |  |  |  |
|  | 5238 | **RHD4-02-002-A02-(RD)-Bituminous concrete wearing course including tack coat (RC2)** |  | 2027-01-19 | 2027-01-20 |  |
| RHD4CZ6A02RD4100 |  | Supply, lay and compaction Asphaltic wearing course including tack Coat (RC2)for Road Network - (RD-A-2)-Z6-A02-RD | 2d | 2027-01-19 | 2027-01-20 | RHD4CZ6A02RD5100 |
|  | 5243 | **RHD4-02-002-A02-(RD)-Speed Table and Wheel Stopper** |  |  |  |  |
|  | 5241 | **RHD4-02-002-A02-(RD)-Pavement Marking** |  | 2027-01-23 | 2027-01-25 |  |
| RHD4CZ6A02RD7100 |  | Pavement Markings for Road Network - (RD-A-2)-Z6-A02-RD | 3d | 2027-01-23 | 2027-01-25 | RHD4CZ6A02RD4100, RHD4PRSHLDOSRD1500, RHD4PRSHLSTAGRD1500, RHD4CZ6A02RD8100 |
|  | 5059 | **RHD4-02-002-Z6-A02-Storm Network - ST** |  | 2026-07-25 | 2026-08-11 |  |
|  | 5076 | **RHD4-02-002-A02-(ST)-MH Works - 1200 mm diameter** |  | 2026-07-25 | 2026-08-04 |  |
| RHD4CZ6A02ST3100 |  | Excavation and PC Blinding works for MH 1200 mm - (RD-A-2)-Z6-A02-ST | 2d | 2026-07-25 | 2026-07-26 | RHD4ENSDZ6APPST110, RHD4ENMSST2000, RHD4ENMSST2010, RHD4CZ6C052ST1103 |
| RHD4CZ6A02ST3200 |  | Installation of Base for MH 1200 mm - (RD-A-2)-Z6-A02-ST | 2d | 2026-07-27 | 2026-07-28 | RHD4CZ6A02ST3100, RHD4PRSHLSTAGST1605 SS |
| RHD4CZ6A02ST3300 |  | MH Ring and C.Slab works and Backfilling works for MH 1200 mm - (RD-A-2)-Z6-A02-ST | 2d | 2026-07-29 | 2026-07-30 | RHD4CZ6A02ST3200, RHD4PRSHLDOSST1605 |
| RHD4CZ6A02ST3400 |  | Steel Cover for MH 1200 mm - (RD-A-2)-Z6-A02-ST | 2d | 2026-08-01 | 2026-08-02 | RHD4CZ6A02ST3300, RHD4PRSHLDOSST1705, RHD4PRSHLSTAGST1705 |
| RHD4CZ6A02ST3500 |  | Finishing, Benching, Testing works for MH 1200 mm - (RD-A-2)-Z6-A02-ST | 2d | 2026-08-03 | 2026-08-04 | RHD4CZ6A02ST3400 |
|  | 5061 | **RHD4-02-002-A02-(ST)-GRP Pipes - 500 mm diameter** |  | 2026-07-29 | 2026-08-09 |  |
| RHD4CZ6A02ST1101 |  | Excavation works for GRP Pipe Line 500 mm - (RD-A-2)-Z6-A02-ST | 2d | 2026-07-29 | 2026-07-30 | RHD4CZ6A02ST3200, RHD4ENSDZ6APPST110 |
| RHD4CZ6A02ST1201 |  | Bedding works for GRP Pipe Line 500 mm - (RD-A-2)-Z6-A02-ST | 2d | 2026-08-01 | 2026-08-02 | RHD4CZ6A02ST1101 |
| RHD4CZ6A02ST1301 |  | Installing for GRP Pipe Line 500 mm - (RD-A-2)-Z6-A02-ST | 2d | 2026-08-03 | 2026-08-04 | RHD4CZ6A02ST1201, RHD4CZ6A02ST3300, RHD4PRSHLSTAGST1005, RHD4PRSHLDOSST1605, RHD4PRSHLPOST1000, RHD4PRSHLDOSST1005 |
| RHD4CZ6A02ST1401 |  | Primary Test for GRP Pipe Line 500 mm - (RD-A-2)-Z6-A02-ST | 2d | 2026-08-05 | 2026-08-06 | RHD4CZ6A02ST1301 |
| RHD4CZ6A02ST1501 |  | Backfilling and warning tape works for GRP Pipe Line 500 mm - (RD-A-2)-Z6-A02-ST | 2d | 2026-08-08 | 2026-08-09 | RHD4CZ6A02ST1401 |
|  | 5060 | **RHD4-02-002-A02-(ST)-GRP Pipes - 400 mm diameter** |  | 2026-08-01 | 2026-08-11 |  |
| RHD4CZ6A02ST1100 |  | Excavation works for GRP Pipe Line 400 mm - (RD-A-2)-Z6-A02-ST | 2d | 2026-08-01 | 2026-08-02 | RHD4CZ6A02ST1101, RHD4ENSDZ6APPST110 |
| RHD4CZ6A02ST1200 |  | Bedding works for GRP Pipe Line 400 mm - (RD-A-2)-Z6-A02-ST | 2d | 2026-08-03 | 2026-08-04 | RHD4CZ6A02ST1100 |
| RHD4CZ6A02ST1300 |  | Installing for GRP Pipe Line 400 mm - (RD-A-2)-Z6-A02-ST | 2d | 2026-08-05 | 2026-08-06 | RHD4CZ6A02ST1200, RHD4CZ6A02ST1301, RHD4PRSHLSTAGST1005, RHD4PRSHLDOSST1605, RHD4PRSHLPOST1000, RHD4PRSHLDOSST1005 |
| RHD4CZ6A02ST1400 |  | Primary Test for GRP Pipe Line 400 mm - (RD-A-2)-Z6-A02-ST | 2d | 2026-08-08 | 2026-08-09 | RHD4CZ6A02ST1300 |
| RHD4CZ6A02ST1500 |  | Backfilling and warning tape works for GRP Pipe Line 400 mm - (RD-A-2)-Z6-A02-ST | 2d | 2026-08-10 | 2026-08-11 | RHD4CZ6A02ST1400, RHD4CZ6A02ST1501 |
|  | 5074 | **RHD4-02-002-A02-(ST)-UPVC Pipes - 300 mm diameter** |  | 2026-07-29 | 2026-08-09 |  |
| RHD4CZ6A02ST2100 |  | Excavation works for UPVC Pipe Line 300 mm - (RD-A-2)-Z6-A02-ST | 2d | 2026-07-29 | 2026-07-30 | RHD4ENSDZ6APPST110, RHD4CZ6A02ST3200 |
| RHD4CZ6A02ST2200 |  | Bedding works for UPVC Pipe Line 300 mm - (RD-A-2)-Z6-A02-ST | 2d | 2026-08-01 | 2026-08-02 | RHD4CZ6A02ST2100 |
| RHD4CZ6A02ST2300 |  | Installing for UPVC Pipe Line 300 mm - (RD-A-2)-Z6-A02-ST | 2d | 2026-08-03 | 2026-08-04 | RHD4CZ6A02ST2200, RHD4CZ6A02ST7300, RHD4PRSHLDOSST1105, RHD4PRSHLSTAGST1105 |
| RHD4CZ6A02ST2400 |  | Primary Test for UPVC Pipe Line 300 mm - (RD-A-2)-Z6-A02-ST | 2d | 2026-08-05 | 2026-08-06 | RHD4CZ6A02ST2300 |
| RHD4CZ6A02ST2500 |  | Backfilling and warning tape works for UPVC Pipe Line 300 mm - (RD-A-2)-Z6-A02-ST | 2d | 2026-08-08 | 2026-08-09 | RHD4CZ6A02ST2400, RHD4CZ6A02ST6100 |
|  | 5082 | **RHD4-02-002-A02-(ST)-Concrete Encasement** |  | 2026-08-03 | 2026-08-04 |  |
| RHD4CZ6A02ST6100 |  | Pipe Encasement for Storm Pipelines - (RD-A-2)-Z6-A02-ST | 2d | 2026-08-03 | 2026-08-04 | RHD4CZ6A02ST2300 SS, RHD4CZ6A02ST2300 FF, RHD4CZ6A02ST2200 |
|  | 5083 | **RHD4-02-002-Z6-A02-Catch Basin - ST** |  | 2026-07-27 | 2026-08-06 |  |
|  | 5084 | **RHD4-02-002-A02-(ST)-Single Catch Basin Works** |  | 2026-07-27 | 2026-08-06 |  |
| RHD4CZ6A02ST7100 |  | Excavation works for Single Catch Basin - (RD-A-2)-Z6-A02-ST | 2d | 2026-07-27 | 2026-07-28 | RHD4ENSDZ6APPST110, RHD4CZ6A02ST3100 |

| ID | WBS | Task | Duration | Start | Finish | Predecessors |
| --- | --- | --- | --- | --- | --- | --- |
| RHD4CZ6A02ST7200 |  | PC Blinding, Installation and Pipe connection for Single Catch Basin - (RD-A-2)-Z6-A02-ST | 2d | 2026-07-29 | 2026-07-30 | RHD4CZ6A02ST7100 |
| RHD4CZ6A02ST7300 |  | Rings & C.Slab & Final Backfill for Single Catch Basin - (RD-A-2)-Z6-A02-ST | 2d | 2026-08-01 | 2026-08-02 | RHD4CZ6A02ST7200, RHD4PRSHLDOSST1305, RHD4PRSHLSTAGST1305 |
| RHD4CZ6A02ST7400 |  | Steel Cover for Single Catch Basin - (RD-A-2)-Z6-A02-ST | 2d | 2026-08-03 | 2026-08-04 | RHD4CZ6A02ST7300, RHD4PRSHLDOSST1705, RHD4CZ6A02ST3400 |
| RHD4CZ6A02ST7500 |  | Finishing and Insulation works for Single Catch Basin - (RD-A-2)-Z6-A02-ST | 2d | 2026-08-05 | 2026-08-06 | RHD4CZ6A02ST7400 |
|  | 3973 | **RHD4-02-002-Z6-A02-Sewage Network - SW** |  | 2026-07-27 | 2026-08-09 |  |
|  | 3794 | **RHD4-02-002-A02-(SW)-MH Works - 1200 mm diameter** |  | 2026-07-29 | 2026-08-09 |  |
| RHD4CZ6A02SW3100 |  | Excavation and PC Blinding works for MH 1200 mm - (RD-A-2)-Z6-A02-SW | 2d | 2026-07-29 | 2026-07-30 | RHD4CZ6A02SW2100 |
| RHD4CZ6A02SW3200 |  | Installation of Base for MH 1200 mm - (RD-A-2)-Z6-A02-SW | 2d | 2026-08-01 | 2026-08-02 | RHD4CZ6A02SW3100 |
| RHD4CZ6A02SW3300 |  | MH Ring and C.Slab works and Backfilling works for MH 1200 mm - (RD-A-2)-Z6-A02-SW | 2d | 2026-08-03 | 2026-08-04 | RHD4CZ6A02SW3200 |
| RHD4CZ6A02SW3400 |  | Steel Cover for MH 1200 mm - (RD-A-2)-Z6-A02-SW | 2d | 2026-08-05 | 2026-08-06 | RHD4CZ6A02SW3300 |
| RHD4CZ6A02SW3500 |  | Finishing, Benching, Testing works for MH 1200 mm - (RD-A-2)-Z6-A02-SW | 2d | 2026-08-08 | 2026-08-09 | RHD4CZ6A02SW3400 |
|  | 3979 | **RHD4-02-002-A02-(SW)-UPVC Pipes - 200 mm diameter** |  | 2026-07-27 | 2026-08-06 |  |
| RHD4CZ6A02SW2100 |  | Excavation works for UPVC Pipe Line 200 mm - (RD-A-2)-Z6-A02-SW | 2d | 2026-07-27 | 2026-07-28 | RHD4CZ6A02ST3100 |
| RHD4CZ6A02SW2200 |  | Bedding works for UPVC Pipe Line 200 mm - (RD-A-2)-Z6-A02-SW | 2d | 2026-07-29 | 2026-07-30 | RHD4CZ6A02SW2100 |
| RHD4CZ6A02SW2300 |  | Installing for UPVC Pipe Line 200 mm - (RD-A-2)-Z6-A02-SW | 2d | 2026-08-01 | 2026-08-02 | RHD4CZ6A02SW2200 |
| RHD4CZ6A02SW2400 |  | Primary Test for UPVC Pipe Line 200 mm - (RD-A-2)-Z6-A02-SW | 2d | 2026-08-03 | 2026-08-04 | RHD4CZ6A02SW2300 |
| RHD4CZ6A02SW2500 |  | Backfilling and warning tape works for UPVC Pipe Line 200 mm - (RD-A-2)-Z6-A02-SW | 2d | 2026-08-05 | 2026-08-06 | RHD4CZ6A02SW3300, RHD4CZ6A02SW2400 |
|  | 5145 | **RHD4-02-002-Z6-A02-Potable Network - PT** |  | 2026-08-10 | 2026-09-01 |  |
|  | 5159 | **RHD4-02-002-A02-(PT)-Concrete Encasement** |  |  |  |  |
|  | 4962 | **RHD4-02-002-A02-(PT)-Gate Valves (Direct Buried)** |  | 2026-08-15 | 2026-08-23 |  |
| RHD4CZ6A02PT3100 |  | Installation for Direct Buried Gate Valves - (RD-A-2)-Z6-A02-PT | 2d | 2026-08-15 | 2026-08-16 | RHD4CZ6A02SW2500, RHD4CZ6A02PT1301 FF, RHD4CZ6A02PT1301 SS |
| RHD4CZ6A02PT3200 |  | Stem and Service box for Direct Buried Gate Valves - (RD-A-2)-Z6-A02-PT | 2d | 2026-08-22 | 2026-08-23 | RHD4CZ6A02PT3100, RHD4CZ6A02PT1501 |
|  | 4969 | **RHD4-02-002-A02-(PT)-Fire Hydrant** |  | 2026-08-22 | 2026-09-01 |  |
| RHD4CZ6A02PT4100 |  | Excavation and Bedding and Pipe Installation for Fire Hydrant - (RD-A-2)-Z6-A02-PT | 2d | 2026-08-22 | 2026-08-23 | RHD4CZ6A02ST2500, RHD4CZ6A02PT1501 |
| RHD4CZ6A02PT4200 |  | Valve Installation for Fire Hydrant - (RD-A-2)-Z6-A02-PT | 2d | 2026-08-24 | 2026-08-25 | RHD4CZ6A02PT4100 |
| RHD4CZ6A02PT4300 |  | Stem for Fire Hydrant - (RD-A-2)-Z6-A02-PT | 2d | 2026-08-26 | 2026-08-27 | RHD4CZ6A02PT4200 |
| RHD4CZ6A02PT4400 |  | Fire Installation for Fire Hydrant - (RD-A-2)-Z6-A02-PT | 2d | 2026-08-29 | 2026-08-30 | RHD4CZ6A02PT4300 |
| RHD4CZ6A02PT4500 |  | Protection Barriers for Fire Hydrant - (RD-A-2)-Z6-A02-PT | 2d | 2026-08-31 | 2026-09-01 | RHD4CZ6A02PT4400 |
|  | 4958 | **RHD4-02-002-A02-(PT)-HDPE Pipes - 160 mm diameter** |  | 2026-08-10 | 2026-08-20 |  |
| RHD4CZ6A02PT1101 |  | Excavation works for HDPE Pipline 160 mm - (RD-A-2)-Z6-A02-PT | 2d | 2026-08-10 | 2026-08-11 | RHD4CZ6A02SW2500, RHD4CZ6A02ST2500 |
| RHD4CZ6A02PT1201 |  | Bedding works for HDPE Pipline 160 mm - (RD-A-2)-Z6-A02-PT | 2d | 2026-08-12 | 2026-08-13 | RHD4CZ6A02PT1101 |
| RHD4CZ6A02PT1301 |  | Installing for HDPE Pipline 160 mm - (RD-A-2)-Z6-A02-PT | 2d | 2026-08-15 | 2026-08-16 | RHD4CZ6A02PT1201 |
| RHD4CZ6A02PT1401 |  | Primary Test for HDPE Pipline 160 mm - (RD-A-2)-Z6-A02-PT | 2d | 2026-08-17 | 2026-08-18 | RHD4CZ6A02PT1301, RHD4CZ6A02PT3100 |
| RHD4CZ6A02PT1501 |  | Backfilling and warning tape works for HDPE Pipline 160 mm - (RD-A-2)-Z6-A02-PT | 2d | 2026-08-19 | 2026-08-20 | RHD4CZ6A02PT1401 |
|  | 5201 | **RHD4-02-002-Z6-A02-Low Voltage Network - LV** |  | 2026-08-12 | 2026-09-28 |  |
|  | 5202 | **RHD4-02-002-A02-(LV)-Low Voltage duct banks** |  | 2026-08-12 | 2026-08-22 |  |
| RHD4CZ6A02LV2100 |  | Excavation of Duct Banks for Low Voltage Network - (RD-A-2)-Z6-A02-LV | 2d | 2026-08-12 | 2026-08-13 | RHD4ENSDZ6APPLV160, RHD4CZ6A02PT1101 |
| RHD4CZ6A02LV2200 |  | Installation of Duct Banks for Low Voltage Network - (RD-A-2)-Z6-A02-LV | 3d | 2026-08-15 | 2026-08-17 | RHD4CZ6A02LV2100, RHD4PRSHLDOSLV1000, RHD4PRSHLSTAGLV1000 |
| RHD4CZ6A02LV2300 |  | Pouring of Duct Banks for Low Voltage Network - (RD-A-2)-Z6-A02-LV | 2d | 2026-08-18 | 2026-08-19 | RHD4CZ6A02LV2200 |
| RHD4CZ6A02LV2400 |  | Backfilling of Duct Banks for Low Voltage Network - (RD-A-2)-Z6-A02-LV | 2d | 2026-08-20 | 2026-08-22 | RHD4CZ6A02LV2300 |
|  | 5203 | **RHD4-02-002-A02-(LV)-Low Voltage Drawpit** |  | 2026-09-14 | 2026-09-17 |  |
| RHD4CZ6A02LV5100 |  | Excavation of Drawpit size 900x900x1000mm for Low Voltage Network - (RD-A-2)-Z6-A02-LV | 2d | 2026-09-14 | 2026-09-15 | RHD4CZ6A02LV2300, RHD4ENSDZ6APPLV160, RHD4CZ6A02RD3100 |
| RHD4CZ6A02LV5200 |  | Installation of Drawpit size 900x900x1000mm for Low Voltage Network - (RD-A-2)-Z6-A02-LV | 2d | 2026-09-16 | 2026-09-17 | RHD4CZ6A02LV5100, RHD4PRSHLDOSLV1400, RHD4PRSHLSTAGLV1400 |
|  | 5204 | **RHD4-02-002-A02-(LV)-Low Voltage cables** |  | 2026-09-19 | 2026-09-28 |  |
| RHD4CZ6A02LV3100 |  | Excavation for Low Voltage Cables for Low Voltage Network - (RD-A-2)-Z6-A02-LV | 2d | 2026-09-19 | 2026-09-20 | RHD4CZ6A02LV2400, RHD4ENSDZ6APPLV160, RHD4CZ6A02LV5200 |
| RHD4CZ6A02LV3200 |  | Cable Laying of Low Voltage Cables for Low Voltage Network - (RD-A-2)-Z6-A02-LV | 2d | 2026-09-21 | 2026-09-22 | RHD4CZ6A02LV3100, RHD4PRSHLDOSLV1100, RHD4ENMSLV2000, RHD4ENMSLV2010, RHD4PRSHLSTAGLV1100 |
| RHD4CZ6A02LV3300 |  | Warning tape and Backfill for Low Voltage Cables for Low Voltage Network - (RD-A-2)-Z6-A02-LV | 2d | 2026-09-24 | 2026-09-26 | RHD4CZ6A02LV3200 |
| RHD4CZ6A02LV3400 |  | Testing of Low Voltage Cables for Low Voltage Network - (RD-A-2)-Z6-A02-LV | 2d | 2026-09-27 | 2026-09-28 | RHD4CZ6A02LV3300 |
|  | 5207 | **RHD4-02-002-Z6-A02-Street Lighting Network - SL** |  | 2026-11-14 | 2026-12-06 |  |
|  | 5210 | **RHD4-02-002-A02-(SL)-Street Lighting cables** |  | 2026-11-14 | 2026-11-22 |  |
| RHD4CZ6A02SL3100 |  | Excavation for Street Lighting Cables for Street Lighting Network - (RD-A-2)-Z6-A02-SL | 2d | 2026-11-14 | 2026-11-15 | RHD4ENSDZ6APPSL170, RHD4CZ6A02LV3400, RHD4CZ6C052SL2400 |
| RHD4CZ6A02SL3200 |  | Cable Laying of Street Lighting Cables for Street Lighting Network - (RD-A-2)-Z6-A02-SL | 2d | 2026-11-16 | 2026-11-17 | RHD4CZ6A02SL3100, RHD4PRSHLDOSSL1100, RHD4ENMSSL2000, RHD4ENMSSL2010, RHD4PRSHLSTAGSL1100 |
| RHD4CZ6A02SL3300 |  | Warning tape and Backfill for Street Lighting Cables for Street Lighting Network - (RD-A-2)-Z6-A02-SL | 2d | 2026-11-18 | 2026-11-19 | RHD4CZ6A02SL3200 |
| RHD4CZ6A02SL3400 |  | Testing of Street Lighting Cables for Street Lighting Network - (RD-A-2)-Z6-A02-SL | 2d | 2026-11-21 | 2026-11-22 | RHD4CZ6A02SL3300 |
|  | 5211 | **RHD4-02-002-A02-(SL)-Street Lighting Poles** |  | 2026-11-23 | 2026-12-06 |  |
| RHD4CZ6A02SL1100 |  | Excavation for RC Base for Lighting Poles for Street Lighting Network - (RD-A-2)-Z6-A02-SL | 2d | 2026-11-23 | 2026-11-24 | RHD4ENSDZ6APPSL170, RHD4CZ6A02SL3400 |
| RHD4CZ6A02SL1200 |  | Installation for RC Base for Lighting Poles for Street Lighting Network - (RD-A-2)-Z6-A02-SL | 2d | 2026-11-25 | 2026-11-26 | RHD4CZ6A02SL1100 |
| RHD4CZ6A02SL1300 |  | Backfill for RC Base for Lighting Poles for Street Lighting Network - (RD-A-2)-Z6-A02-SL | 2d | 2026-11-28 | 2026-11-29 | RHD4CZ6A02SL1200 |
| RHD4CZ6A02SL1400 |  | Installation for Lighting Poles for Street Lighting Network - (RD-A-2)-Z6-A02-SL | 2d | 2026-11-30 | 2026-12-01 | RHD4CZ6A02SL1300, RHD4CZ6A02SL3400, RHD4PRSHLDOSSL1200, RHD4ENMSSL2000, RHD4ENMSSL2010, RHD4PRSHLSTAGSL1200 |
| RHD4CZ6A02SL1500 |  | Luminaire Installation for Lighting Poles for Street Lighting Network - (RD-A-2)-Z6-A02-SL | 2d | 2026-12-05 | 2026-12-06 | RHD4CZ6A02SL1400, RHD4CZ6A02SL6100, RHD4PRSHLDOSSL1300, RHD4PRSHLSTAGSL1300 |
|  | 5213 | **RHD4-02-002-A02-(SL)-Street Lighting Earthing System** |  | 2026-12-02 | 2026-12-03 |  |
| RHD4CZ6A02SL6100 |  | Installation of Earthing for Lighting Poles and Fedder Pillers for Street Lighting Network - (RD-A-2)-Z6-A02-SL | 2d | 2026-12-02 | 2026-12-03 | RHD4CZ6A02SL1400, RHD4ENMSER2000, RHD4ENMSER2010 |
|  | 5219 | **RHD4-02-002-Z6-A02-Telecommunications Network - TC** |  | 2026-12-07 | 2026-12-15 |  |
|  | 5220 | **RHD4-02-002-A02-(TC)-Telecommunications Ducts** |  | 2026-12-07 | 2026-12-15 |  |
| RHD4CZ6A02TC2100 |  | Excavation of HDPE Ducts for Telecom Network - (RD-A-2)-Z6-A02-TC | 2d | 2026-12-07 | 2026-12-08 | RHD4ENSDZ6APPTC190, RHD4CZ6A02SL1500 |
| RHD4CZ6A02TC2200 |  | Installation of HDPE Ducts for Telecom Network - (RD-A-2)-Z6-A02-TC | 3d | 2026-12-09 | 2026-12-12 | RHD4CZ6A02TC2100, RHD4PRSHLDOSTC1000, RHD4PRSHLSTAGTC1000 |
| RHD4CZ6A02TC2400 |  | Backfilling of HDPE Ducts for Telecom Network - (RD-A-2)-Z6-A02-TC | 2d | 2026-12-14 | 2026-12-15 | RHD4CZ6A02TC2200, RHD4CZ6A02TC5200 |
|  | 5221 | **RHD4-02-002-A02-(TC)-Telecommunications Manholes** |  | 2026-12-09 | 2026-12-13 |  |
| RHD4CZ6A02TC5100 |  | Excavation for Manholes for Telecom Network - (RD-A-2)-Z6-A02-TC | 2d | 2026-12-09 | 2026-12-10 | RHD4CZ6A02TC2100, RHD4ENSDZ6APPTC190 |
| RHD4CZ6A02TC5200 |  | Installation of Manholes for Telecom Network - (RD-A-2)-Z6-A02-TC | 2d | 2026-12-12 | 2026-12-13 | RHD4CZ6A02TC5100, RHD4CZ6A02TC2200 SS, RHD4PRSHLDOSTC1200, RHD4PRSHLSTAGTC1200 |

| ID | WBS | Task | Duration | Start | Finish | Predecessors |
| --- | --- | --- | --- | --- | --- | --- |
|  | 5223 | **RHD4-02-002-Z6-A02-Information and Communication Technologies - ICT** |  | 2026-12-16 | 2026-12-27 |  |
|  | 5224 | **RHD4-02-002-A02-(ICT)-Information and Communication Technologies Ducts** |  | 2026-12-16 | 2026-12-27 |  |
| RHD4CZ6A02ICT2100 |  | Excavation of HDPE Ducts for ICT Network - (RD-A-2)-Z6-A02-ICT | 3d | 2026-12-16 | 2026-12-19 | RHD4ENSDZ6APPICT200, RHD4CZ6A02TC2400 |
| RHD4CZ6A02ICT2200 |  | Installation of HDPE Ducts for ICT Network - (RD-A-2)-Z6-A02-ICT | 4d | 2026-12-20 | 2026-12-23 | RHD4CZ6A02ICT2100, RHD4PRSHLDOSICT1000, RHD4PRSHLSTAGICT1000 |
| RHD4CZ6A02ICT2400 |  | Backfilling of HDPE Ducts for ICT Network - (RD-A-2)-Z6-A02-ICT | 3d | 2026-12-24 | 2026-12-27 | RHD4CZ6A02ICT2200, RHD4CZ6A02ICT5200 |
|  | 5225 | **RHD4-02-002-A02-(ICT)-Information and Communication Technologies Manholes** |  | 2026-12-20 | 2026-12-23 |  |
| RHD4CZ6A02ICT5100 |  | Excavation for Manholes for ICT Network - (RD-A-2)-Z6-A02-ICT | 2d | 2026-12-20 | 2026-12-21 | RHD4CZ6A02ICT2100, RHD4ENSDZ6APPICT200 |
| RHD4CZ6A02ICT5200 |  | Installation of Manholes for ICT Network - (RD-A-2)-Z6-A02-ICT | 2d | 2026-12-22 | 2026-12-23 | RHD4CZ6A02ICT5100, RHD4PRSHLDOSICT1200, RHD4PRSHLSTAGICT1200 |
|  | 5214 | **RHD4-02-002-Z6-A02-Landscape Network - LS** |  |  |  |  |
|  | 5215 | **RHD4-02-002-A02-(LS)-Landscape Lighting cables** |  |  |  |  |
|  | 5216 | **RHD4-02-002-A02-(LS)-Landscape Feeder Pillars** |  |  |  |  |
|  | 5217 | **RHD4-02-002-A02-(LS)-Landscape Bollard Poles** |  |  |  |  |
|  | 5218 | **RHD4-02-002-A02-(LS)-Landscape Feeder Pillars Earthing** |  |  |  |  |
|  | 5227 | **RHD4-02-002-Z6-A02-Security Network - CCTV** |  | 2026-12-28 | 2027-01-10 |  |
|  | 5228 | **RHD4-02-002-A02-(CCTV)-Civil Works** |  |  |  |  |
|  | 5229 | **RHD4-02-002-A02-(CCTV)-CCTV Poles** |  | 2026-12-28 | 2027-01-05 |  |
| RHD4CZ6A02CCTV1100 |  | Excavation for RC Base for CCTV Poles for Security Network - (RD-A-2)-Z6-A02-CCTV | 2d | 2026-12-28 | 2026-12-29 | RHD4ENSDZ6APPCCTV210, RHD4CZ6A02ICT2400, RHD4CZ6C052MV4200, RHD4CZ6C052MV3401, RHD4CZ6C052MV3400 |
| RHD4CZ6A02CCTV1200 |  | Installation for RC Base for CCTV Poles for Security Network - (RD-A-2)-Z6-A02-CCTV | 2d | 2026-12-30 | 2026-12-31 | RHD4CZ6A02CCTV1100 |
| RHD4CZ6A02CCTV1300 |  | Backfill for RC Base for CCTV Poles for Security Network - (RD-A-2)-Z6-A02-CCTV | 2d | 2027-01-02 | 2027-01-03 | RHD4CZ6A02CCTV1200 |
| RHD4CZ6A02CCTV1400 |  | Installation for CCTV Poles for Security Network - (RD-A-2)-Z6-A02-CCTV | 2d | 2027-01-04 | 2027-01-05 | RHD4CZ6A02CCTV1300, RHD4PRSHLDOSCCTV1000, RHD4PRSHLSTACCTV1000 |
|  | 5230 | **RHD4-02-002-A02-(CCTV)-Camera** |  | 2027-01-06 | 2027-01-07 |  |
| RHD4CZ6A02CCTV3100 |  | Installation for Cameras for Security Network - (RD-A-2)-Z6-A02-CCTV | 2d | 2027-01-06 | 2027-01-07 | RHD4CZ6A02CCTV1400, RHD4PRSHLDOSCCTV1100, RHD4PRSHLSTACCTV1100 |
|  | 5231 | **RHD4-02-002-A02-(CCTV)-Power and Infrastructure** |  |  |  |  |
|  | 5233 | **RHD4-02-002-A02-(CCTV)-CCTV Panels and Components** |  | 2027-01-09 | 2027-01-10 |  |
| RHD4CZ6A02CCTV6100 |  | Installation for CCTV Panels for Security Network - (RD-A-2)-Z6-A02-CCTV | 2d | 2027-01-09 | 2027-01-10 | RHD4CZ6A02CCTV3100, RHD4PRSHLDOSCCTV1200, RHD4PRSHLSTACCTV1200, RHD4PRLOLSTACCTV1001 |
|  | 5433 | **RHD4-02-002-Z6-RA01** |  | 2026-08-10 | 2027-03-29 |  |
|  | 5612 | **RHD4-02-002-Z6-RA01-Road Works - RD** |  | 2026-08-10 | 2027-03-29 |  |
|  | 5613 | **RHD4-02-002-RA01-(RD)-Subgrade** |  | 2026-08-10 | 2026-08-13 |  |
| RHD4CZ6RA01RD1100 |  | Supply, lay and compaction subgrade compacted thickness 300 mm for Roads - (ROUND-01)-Z6-RA01-RD | 4d | 2026-08-10 | 2026-08-13 | RHD4ENSDZ6APPRD220, RHD4ENSDZ6APPEW100, RHD4CZ6A02RD1100 SS |
|  | 5614 | **RHD4-02-002-RA01-(RD)-Aggregate Base Course** |  | 2026-08-15 | 2026-08-18 |  |
| RHD4CZ6RA01RD2100 |  | Supply, lay and compaction Aggregate base course compacted thickness 300 mmfor Roads - (ROUND-01)-Z6-RA01-RD | 4d | 2026-08-15 | 2026-08-18 | RHD4CZ6RA01RD1100 |
|  | 5615 | **RHD4-02-002-RA01-(RD)-Bituminous base course Two Layers, including (MC1)&(RC2)** |  | 2026-09-27 | 2027-03-07 |  |
| RHD4CZ6RA01RD3100 |  | Supply, lay and Asphaltic base course including Prime Coat (MC1) for 1st Layer - (ROUND-01)-Z6-RA01-RD | 2d | 2026-09-27 | 2026-09-28 | RHD4CZ6RA01RD2100, RHD4ENMSASPH2000, RHD4ENMSASPH2010, RHD4CZ6C062RD3100 |
| RHD4CZ6RA01RD3200 |  | Supply, lay and Asphaltic base course including Tack Coat (RC2) for 2nd Layer - (ROUND-01)-Z6-RA01-RD | 2d | 2027-03-06 | 2027-03-07 | RHD4CZ6RA01CCTV5200 |
|  | 5617 | **RHD4-02-002-RA01-(RD)-Precast Concrete Curb** |  | 2027-03-08 | 2027-03-14 |  |
| RHD4CZ6RA01RD5100 |  | Supply and installation Precast Concrete Kerb for Roads - (ROUND-01)-Z6-RA01-RD | 3d | 2027-03-08 | 2027-03-14 | RHD4CZ6RA01RD3200, RHD4ENMSRD2000, RHD4ENMSRD2010 |
|  | 5620 | **RHD4-02-002-RA01-(RD)-Traffic Signage** |  | 2027-03-15 | 2027-03-25 |  |
| RHD4CZ6RA01RD8100 |  | Installation of Traffic Signage for Road Network - (ROUND-01)-Z6-RA01-RD | 10d | 2027-03-15 | 2027-03-25 | RHD4CZ6RA01RD5100 |
|  | 5618 | **RHD4-02-002-RA01-(RD)-Precast Interlocking Block Pavers** |  |  |  |  |
|  | 5616 | **RHD4-02-002-RA01-(RD)-Bituminous concrete wearing course including tack coat (RC2)** |  | 2027-03-15 | 2027-03-16 |  |
| RHD4CZ6RA01RD4100 |  | Supply, lay and compaction Asphaltic wearing course including tack Coat (RC2)for Road Network - (ROUND-01)-Z6-RA01-RD | 2d | 2027-03-15 | 2027-03-16 | RHD4CZ6RA01RD5100 |
|  | 5619 | **RHD4-02-002-RA01-(RD)-Pavement Marking** |  | 2027-03-17 | 2027-03-29 |  |
| RHD4CZ6RA01RD7100 |  | Pavement Markings for Road Network - (ROUND-01)-Z6-RA01-RD | 5d | 2027-03-17 | 2027-03-22 | RHD4CZ6RA01RD4100 |
| RHD4CZ6RA01RD9100 |  | Installation for Speed Bump for Road Network - (ROUND-01)-Z6-RA01-RD | 6d | 2027-03-23 | 2027-03-29 | RHD4CZ6RA01RD7100 |
|  | 5585 | **RHD4-02-002-Z6-RA01-Street Lighting Network - SL** |  | 2026-12-07 | 2027-01-09 |  |
|  | 5586 | **RHD4-02-002-RA01-(SL)-Street Lighting duct banks** |  | 2026-12-07 | 2026-12-16 |  |
| RHD4CZ6RA01SL2100 |  | Excavation of Duct Banks for Street Lighting Network - (ROUND-01)-Z6-RA01-SL | 2d | 2026-12-07 | 2026-12-08 | RHD4CZ6RA01RA3000, RHD4ENSDZ6APPSL170, RHD4CZ6C052MV2100, RHD4CZ6A02SL1500 |
| RHD4CZ6RA01SL2200 |  | Installation of Duct Banks for Street Lighting Network - (ROUND-01)-Z6-RA01-SL | 3d | 2026-12-09 | 2026-12-12 | RHD4CZ6RA01SL2100 |
| RHD4CZ6RA01SL2300 |  | Pouring of Duct Banks for Street Lighting Network - (ROUND-01)-Z6-RA01-SL | 2d | 2026-12-13 | 2026-12-14 | RHD4CZ6RA01SL2200 |
| RHD4CZ6RA01SL2400 |  | Backfilling of Duct Banks for Street Lighting Network - (ROUND-01)-Z6-RA01-SL | 2d | 2026-12-15 | 2026-12-16 | RHD4CZ6RA01SL2300 |
|  | 5587 | **RHD4-02-002-RA01-(SL)-Street Lighting Drawpit** |  | 2026-12-15 | 2026-12-19 |  |
| RHD4CZ6RA01SL5100 |  | Excavation of Drawpit size 600x600x900mm for Street Lighting Network - (ROUND-01)-Z6-RA01-SL | 2d | 2026-12-15 | 2026-12-16 | RHD4CZ6RA01SL2300, RHD4ENSDZ6APPSL170, RHD4CZ6RA01RD3100 |
| RHD4CZ6RA01SL5200 |  | Installation of Drawpit size 600x600x900mm for Street Lighting Network - (ROUND-01)-Z6-RA01-SL | 2d | 2026-12-17 | 2026-12-19 | RHD4CZ6RA01SL5100, RHD4PRSHLDOSSL1400, RHD4PRSHLSTAGSL1400 |
|  | 5588 | **RHD4-02-002-RA01-(SL)-Street Lighting cables** |  | 2026-12-20 | 2026-12-28 |  |
| RHD4CZ6RA01SL3100 |  | Excavation for Street Lighting Cables for Street Lighting Network - (ROUND-01)-Z6-RA01-SL | 2d | 2026-12-20 | 2026-12-21 | RHD4ENSDZ6APPSL170, RHD4CZ6RA01SL5200, RHD4CZ6RA01SL2400 |
| RHD4CZ6RA01SL3200 |  | Cable Laying of Street Lighting Cables for Street Lighting Network - (ROUND-01)-Z6-RA01-SL | 2d | 2026-12-22 | 2026-12-23 | RHD4CZ6RA01SL3100, RHD4ENMSSL2000, RHD4ENMSSL2010 |
| RHD4CZ6RA01SL3300 |  | Warning tape and Backfill for Street Lighting Cables for Street Lighting Network - (ROUND-01)-Z6-RA01-SL | 2d | 2026-12-24 | 2026-12-26 | RHD4CZ6RA01SL3200 |
| RHD4CZ6RA01SL3400 |  | Testing of Street Lighting Cables for Street Lighting Network - (ROUND-01)-Z6-RA01-SL | 2d | 2026-12-27 | 2026-12-28 | RHD4CZ6RA01SL3300 |
|  | 5589 | **RHD4-02-002-RA01-(SL)-Street Lighting Poles** |  | 2026-12-29 | 2027-01-09 |  |
| RHD4CZ6RA01SL1100 |  | Excavation for RC Base for Lighting Poles for Street Lighting Network - (ROUND-01)-Z6-RA01-SL | 2d | 2026-12-29 | 2026-12-30 | RHD4ENSDZ6APPSL170, RHD4CZ6RA01SL3400 |
| RHD4CZ6RA01SL1200 |  | Installation for RC Base for Lighting Poles for Street Lighting Network - (ROUND-01)-Z6-RA01-SL | 2d | 2026-12-31 | 2027-01-02 | RHD4CZ6RA01SL1100 |
| RHD4CZ6RA01SL1300 |  | Backfill for RC Base for Lighting Poles for Street Lighting Network - (ROUND-01)-Z6-RA01-SL | 2d | 2027-01-03 | 2027-01-04 | RHD4CZ6RA01SL1200 |
| RHD4CZ6RA01SL1400 |  | Installation for Lighting Poles for Street Lighting Network - (ROUND-01)-Z6-RA01-SL | 2d | 2027-01-05 | 2027-01-06 | RHD4CZ6RA01SL1300, RHD4CZ6RA01SL3400, RHD4ENMSSL2000, RHD4ENMSSL2010 |
| RHD4CZ6RA01SL1500 |  | Luminaire Installation for Lighting Poles for Street Lighting Network - (ROUND-01)-Z6-RA01-SL | 2d | 2027-01-07 | 2027-01-09 | RHD4CZ6RA01SL1400 |
|  | 5024 | **RHD4-02-002-RA01-(SL)-Street Lighting Earthing System** |  |  |  |  |
|  | 5597 | **RHD4-02-002-Z6-RA01-Telecommunications Network - TC** |  | 2027-01-10 | 2027-01-25 |  |
|  | 5598 | **RHD4-02-002-RA01-(TC)-Telecommunications Ducts** |  | 2027-01-10 | 2027-01-16 |  |
| RHD4CZ6RA01TC2100 |  | Excavation of HDPE Ducts for Telecom Network - (ROUND-01)-Z6-RA01-TC | 2d | 2027-01-10 | 2027-01-11 | RHD4ENSDZ6APPTC190, RHD4CZ6RA01SL1500 |
| RHD4CZ6RA01TC2200 |  | Installation of HDPE Ducts for Telecom Network - (ROUND-01)-Z6-RA01-TC | 2d | 2027-01-12 | 2027-01-13 | RHD4CZ6RA01TC2100, RHD4PRSHLDOSTC1000, RHD4PRSHLSTAGTC1000 |
| RHD4CZ6RA01TC2400 |  | Backfilling of HDPE Ducts for Telecom Network - (ROUND-01)-Z6-RA01-TC | 2d | 2027-01-14 | 2027-01-16 | RHD4CZ6RA01TC2200 |

| ID | WBS | Task | Duration | Start | Finish | Predecessors |
| --- | --- | --- | --- | --- | --- | --- |
|  | 491 | **RHD4-02-002-RA01-(TC)-Telecommunications Manholes** |  | 2027-01-17 | 2027-01-25 |  |
| RHD4CZ6RA01TC5100 |  | Excavation for Manholes for Telecom Network - (ROUND-01)-Z6-RA01-TC | 4d | 2027-01-17 | 2027-01-20 | RHD4CZ6RA01TC2400 |
| RHD4CZ6RA01TC5200 |  | Installation of Manholes for Telecom Network - (ROUND-01)-Z6-RA01-TC | 4d | 2027-01-21 | 2027-01-25 | RHD4CZ6RA01TC5100 |
|  | 5412 | **RHD4-02-002-Z6-RA01-Information and Communication Technologies - ICT** |  |  |  |  |
|  | 5413 | **RHD4-02-002-RA01-(ICT)-Information and Communication Technologies Ducts** |  |  |  |  |
|  | 5414 | **RHD4-02-002-RA01-(ICT)-Information and Communication Technologies Manholes** |  |  |  |  |
|  | 5592 | **RHD4-02-002-Z6-RA01-Landscape Network - LS** |  |  |  |  |
|  | 5593 | **RHD4-02-002-RA01-(LS)-Landscape Lighting cables** |  |  |  |  |
|  | 5594 | **RHD4-02-002-RA01-(LS)-Landscape Feeder Pillars** |  |  |  |  |
|  | 5595 | **RHD4-02-002-RA01-(LS)-Landscape Bollard Poles** |  |  |  |  |
|  | 5596 | **RHD4-02-002-RA01-(LS)-Landscape Feeder Pillars Earthing** |  |  |  |  |
|  | 5605 | **RHD4-02-002-Z6-RA01-Security Network - CCTV** |  | 2027-01-17 | 2027-03-04 |  |
|  | 5606 | **RHD4-02-002-RA01-(CCTV)-Civil Works** |  | 2027-01-17 | 2027-01-21 |  |
| RHD4CZ6RA01CCTV2100 |  | Civil Works for Security Network - (ROUND-01)-Z6-RA01-CCTV | 5d | 2027-01-17 | 2027-01-21 | RHD4CZ6RA01TC2400 |
|  | 5607 | **RHD4-02-002-RA01-(CCTV)-CCTV Poles** |  | 2027-01-26 | 2027-02-06 |  |
| RHD4CZ6RA01CCTV1100 |  | Excavation for RC Base for CCTV Poles for Security Network - (ROUND-01)-Z6-RA01-CCTV | 2d | 2027-01-26 | 2027-01-27 | RHD4CZ6RA01CCTV2100, RHD4ENSDZ6APPCCTV210, RHD4CZ6RA01TC5200 |
| RHD4CZ6RA01CCTV1200 |  | Installation for RC Base for CCTV Poles for Security Network - (ROUND-01)-Z6-RA01-CCTV | 2d | 2027-01-28 | 2027-01-30 | RHD4CZ6RA01CCTV1100 |
| RHD4CZ6RA01CCTV1300 |  | Backfill for RC Base for CCTV Poles for Security Network - (ROUND-01)-Z6-RA01-CCTV | 2d | 2027-01-31 | 2027-02-01 | RHD4CZ6RA01CCTV1200 |
| RHD4CZ6RA01CCTV1400 |  | Installation for CCTV Poles for Security Network - (ROUND-01)-Z6-RA01-CCTV | 2d | 2027-02-02 | 2027-02-03 | RHD4CZ6RA01CCTV1300, RHD4PRSHLDOSCCTV1000, RHD4PRSHLSTACCTV1000 |
| RHD4CZ6RA01CCTV1500 |  | Protection post Installation for CCTV Poles for Security Network - (ROUND-01)-Z6-RA01-CCTV | 2d | 2027-02-04 | 2027-02-06 | RHD4CZ6RA01CCTV1400 |
|  | 5608 | **RHD4-02-002-RA01-(CCTV)-Camera** |  | 2027-02-07 | 2027-02-08 |  |
| RHD4CZ6RA01CCTV3100 |  | Installation for Cameras for Security Network - (ROUND-01)-Z6-RA01-CCTV | 2d | 2027-02-07 | 2027-02-08 | RHD4CZ6RA01CCTV1400, RHD4CZ6RA01CCTV4100, RHD4PRSHLDOSCCTV1100, RHD4PRSHLSTACCTV1100 |
|  | 5609 | **RHD4-02-002-RA01-(CCTV)-Power and Infrastructure** |  | 2027-02-04 | 2027-02-15 |  |
| RHD4CZ6RA01CCTV4100 |  | Installation of Power outlet, UPS and midspan for PTZ Camerafor Cameras for Security Network - (ROUND-01)-Z6-RA01-CCTV | 2d | 2027-02-04 | 2027-02-06 | RHD4CZ6RA01CCTV1400, RHD4PRSHLDOSCCTV1300, RHD4PRSHLSTACCTV1300 |
| RHD4CZ6RA01CCTV4200 |  | Short Range Wireless PoP wireless Bridgefor CCTV Poles for Security Network - (ROUND-01)-Z6-RA01-CCTV | 2d | 2027-02-07 | 2027-02-08 | RHD4CZ6RA01CCTV4100 |
| RHD4CZ6RA01CCTV4300 |  | Fiber Optic Cables for 35m height Pole to Main data Center for CCTV Pole for Security Network - (ROUND-01)-Z6-RA01-CCTV | 6d | 2027-02-09 | 2027-02-15 | RHD4CZ6RA01CCTV4200, RHD4CZ6RA01CCTV3100 |
|  | 5610 | **RHD4-02-002-RA01-(CCTV)-Control Room Equipment** |  | 2027-02-21 | 2027-03-04 |  |
| RHD4CZ6RA01CCTV5100 |  | Installation for Control room Equipment for Security Network - (ROUND-01)-Z6-RA01-CCTV | 8d | 2027-02-21 | 2027-03-02 | RHD4CZ6RA01CCTV6100 |
| RHD4CZ6RA01CCTV5200 |  | Installation of Access Control for Control Room for Security Network - (ROUND-01)-Z6-RA01-CCTV | 2d | 2027-03-03 | 2027-03-04 | RHD4CZ6RA01CCTV5100 |
|  | 5611 | **RHD4-02-002-RA01-(CCTV)-CCTV Panels and Components** |  | 2027-02-16 | 2027-02-20 |  |
| RHD4CZ6RA01CCTV6100 |  | Installation for CCTV Panels for Security Network - (ROUND-01)-Z6-RA01-CCTV | 4d | 2027-02-16 | 2027-02-20 | RHD4CZ6RA01CCTV4200, RHD4PRSHLDOSCCTV1200, RHD4PRSHLSTACCTV1200, RHD4PRLOLSTACCTV1001, RHD4CZ6RA01CCTV4300 |
|  | 3352 | **RHD4-02-002-Z5** |  | 2026-06-13 | 2027-12-15 |  |
|  | 3920 | **RHD4-02-002-Z5-C051** |  | 2026-07-25 | 2027-06-30 |  |
|  | 3951 | **RHD4-02-002-Z5-C051-Crossings Sewage Network - SWCr** |  |  |  |  |
|  | 3961 | **RHD4-02-002-C051-(SWCr)-MH Works - 1200 mm diameter** |  |  |  |  |
|  | 3957 | **RHD4-02-002-C051-(SWCr)-UPVC Pipes - 200 mm diameter** |  |  |  |  |
|  | 3995 | **RHD4-02-002-Z5-C051-Crossings Potable Network - PTCr** |  |  |  |  |
|  | 3996 | **RHD4-02-002-C051-(PTCr)-HDPE Pipes - 110 mm diameter** |  |  |  |  |
|  | 4001 | **RHD4-02-002-C051-(PTCr)-Gate Valves (Direct Buried)** |  |  |  |  |
|  | 4008 | **RHD4-02-002-C051-(PTCr)-Fire Hydrant** |  |  |  |  |
|  | 4042 | **RHD4-02-002-Z5-C051-Crossings Irrigation Network - IRRC** |  |  |  |  |
|  | 4043 | **RHD4-02-002-C051-(IRRC)-HDPE Pipes - 160 mm diameter** |  |  |  |  |
|  | 4051 | **RHD4-02-002-C051-(IRRC)-Gate Valves (Direct Buried)** |  |  |  |  |
|  | 4099 | **RHD4-02-002-Z5-C051-Road Works - RD** |  | 2026-08-24 | 2027-06-30 |  |
|  | 4100 | **RHD4-02-002-C051-(RD)-Subgrade** |  | 2026-08-24 | 2026-09-05 |  |
| RHD4CZ5C051RD1100 |  | Supply, lay and compaction subgrade compacted thickness 300 mm for Roads - (RD-C-5 /1)-Z5-C051-RD | 11d | 2026-08-24 | 2026-09-05 | RHD4ENSDZ5APPRD220, RHD4ENSDZ5APPEW100 SS, RHD4CZ5C051ST3301, RHD4CZ5C051ST3300, RHD4CZ5C051ICT3400, RHD4CZ5C051TC3400 |
|  | 4101 | **RHD4-02-002-C051-(RD)-Aggregate Base Course** |  | 2026-09-06 | 2026-09-10 |  |
| RHD4CZ5C051RD2100 |  | Supply, lay and compaction Aggregate base course compacted thickness 300 mmfor Roads - (RD-C-5 /1)-Z5-C051-RD | 5d | 2026-09-06 | 2026-09-10 | RHD4CZ5C051RD1100, RHD4PRSHLDOSRD1000, RHD4PRSHLSTAGRD1000 |
|  | 4102 | **RHD4-02-002-C051-(RD)-Bituminous base course Two Layers, including (MC1)&(RC2)** |  | 2026-09-12 | 2027-06-03 |  |
| RHD4CZ5C051RD3100 |  | Supply, lay and Asphaltic base course including Prime Coat (MC1) for 1st Layer - (RD-C-5 /1)-Z5-C051-RD | 2d | 2026-09-12 | 2026-09-13 | RHD4CZ5C051RD2100, RHD4PRSHLDOSRD1100, RHD4ENMSASPH2000, RHD4ENMSASPH2010, RHD4PRSHLSTAGRD1100 |
| RHD4CZ5C051RD3200 |  | Supply, lay and Asphaltic base course including Tack Coat (RC2) for 2nd Layer - (RD-C-5 /1)-Z5-C051-RD | 2d | 2027-06-02 | 2027-06-03 | RHD4PRSHLDOSRD1100, RHD4PRSHLSTAGRD1100, RHD4CZ5C051CCTV6100 |
|  | 4104 | **RHD4-02-002-C051-(RD)-Precast Concrete Curb** |  | 2027-06-05 | 2027-06-08 |  |
| RHD4CZ5C051RD5100 |  | Supply and installation Precast Concrete Kerb for Roads - (RD-C-5 /1)-Z5-C051-RD | 4d | 2027-06-05 | 2027-06-08 | RHD4CZ5C051RD3200, RHD4PRSHLDOSRD1200, RHD4ENMSRD2000, RHD4ENMSRD2010, RHD4PRSHLSTAGRD1200 |
|  | 4107 | **RHD4-02-002-C051-(RD)-Traffic Signage** |  | 2027-06-09 | 2027-06-15 |  |
| RHD4CZ5C051RD8100 |  | Installation of Traffic Signage for Road Network - (RD-C-5 /1)-Z5-C051-RD | 6d | 2027-06-09 | 2027-06-15 | RHD4CZ5C051RD5100, RHD4PRSHLDOSRD1600, RHD4PRSHLSTAGRD1600 |
|  | 4105 | **RHD4-02-002-C051-(RD)-Precast Interlocking Block Pavers** |  | 2027-06-16 | 2027-06-22 |  |
| RHD4CZ5C051RD6100 |  | Interlocking block pavers for sidewalk-footpath for Side walks and Parking areas - (RD-C-5 /1)-Z5-C051-RD | 6d | 2027-06-16 | 2027-06-22 | RHD4CZ5C051RD8100, RHD4PRSHLDOSRD1300, RHD4PRSHLDOSRD1400, RHD4ENMSRD2000, RHD4ENMSRD2010, RHD4PRSHLSTAGRD1300, RHD4PRSHLSTAGRD1400 |
|  | 4103 | **RHD4-02-002-C051-(RD)-Bituminous concrete wearing course including tack coat (RC2)** |  | 2027-06-23 | 2027-06-24 |  |
| RHD4CZ5C051RD4100 |  | Supply, lay and compaction Asphaltic wearing course including tack Coat (RC2)for Road Network - (RD-C-5 /1)-Z5-C051-RD | 2d | 2027-06-23 | 2027-06-24 | RHD4CZ5C051RD5100, RHD4CZ5C051RD6100 |
|  | 4108 | **RHD4-02-002-C051-(RD)-Speed Table and Wheel Stopper** |  |  |  |  |
|  | 4106 | **RHD4-02-002-C051-(RD)-Pavement Marking** |  | 2027-06-26 | 2027-06-30 |  |
| RHD4CZ5C051RD7100 |  | Pavement Markings for Road Network - (RD-C-5 /1)-Z5-C051-RD | 5d | 2027-06-26 | 2027-06-30 | RHD4CZ5C051RD4100, RHD4PRSHLDOSRD1500, RHD4PRSHLSTAGRD1500 |
|  | 3924 | **RHD4-02-002-Z5-C051-Storm Network - ST** |  | 2026-07-25 | 2026-08-26 |  |
|  | 3942 | **RHD4-02-002-C051-(ST)-MH Works - 1500 mm diameter** |  | 2026-07-25 | 2026-08-22 |  |
| RHD4CZ5C051ST3101 |  | Excavation and PC Blinding works for MH 1500 mm - (RD-C-5 /1)-Z5-C051-ST | 3d | 2026-07-25 | 2026-07-27 | RHD4CZ5C051RW3000, RHD4ENSDZ5APPST110, RHD4PRSHLSTAGST1604, RHD4CZ6C052ST1103, RHD4PRSHLSTAGST1302, RHD4PRSHLSTAGSL1000 |
| RHD4CZ5C051ST3201 |  | Installation of Base for MH 1500 mm - (RD-C-5 /1)-Z5-C051-ST | 2d | 2026-07-28 | 2026-07-29 | RHD4CZ5C051ST3101, RHD4PRSHLSTAGST1604 |
| RHD4CZ5C051ST3301 |  | MH Ring and C.Slab works and Backfilling works for MH 1500 mm - (RD-C-5 /1)-Z5-C051-ST | 2d | 2026-07-30 | 2026-08-01 | RHD4CZ5C051ST3201, RHD4PRSHLDOSST1604 |
| RHD4CZ5C051ST3401 |  | Steel Cover for MH 1500 mm - (RD-C-5 /1)-Z5-C051-ST | 2d | 2026-08-02 | 2026-08-03 | RHD4CZ5C051ST3301, RHD4PRSHLDOSST1704, RHD4PRSHLSTAGST1704 |
| RHD4CZ5C051ST3501 |  | Finishing, Benching, Testing works for MH 1500 mm - (RD-C-5 /1)-Z5-C051-ST | 2d | 2026-08-20 | 2026-08-22 | RHD4CZ5C051ST3401, RHD4CZ5C051ST2500 |
|  | 3941 | **RHD4-02-002-C051-(ST)-MH Works - 1200 mm diameter** |  | 2026-07-25 | 2026-08-26 |  |

| ID | WBS | Task | Duration | Start | Finish | Predecessors |
| --- | --- | --- | --- | --- | --- | --- |
| RHD4CZ5C051ST3100 |  | Excavation and PC Blinding works for MH 1200 mm - (RD-C-5 /1)-Z5-C051-ST | 3d | 2026-07-25 | 2026-07-27 | RHD4CZ5C051ST3101 SS, RHD4ENSDZ5APPST110, RHD4ENMSST2000, RHD4ENMSST2010 |
| RHD4CZ5C051ST3200 |  | Installation of Base for MH 1200 mm - (RD-C-5 /1)-Z5-C051-ST | 4d | 2026-07-28 | 2026-08-01 | RHD4CZ5C051ST3100, RHD4PRSHLSTAGST1604 |
| RHD4CZ5C051ST3300 |  | MH Ring and C.Slab works and Backfilling works for MH 1200 mm - (RD-C-5 /1)-Z5-C051-ST | 4d | 2026-08-02 | 2026-08-05 | RHD4CZ5C051ST3200, RHD4PRSHLDOSST1604 |
| RHD4CZ5C051ST3400 |  | Steel Cover for MH 1200 mm - (RD-C-5 /1)-Z5-C051-ST | 3d | 2026-08-20 | 2026-08-23 | RHD4CZ5C051ST3300, RHD4CZ5C051ST2500, RHD4PRSHLDOSST1704, RHD4PRSHLSTAGST1704, RHD4CZ5C051ST3401 |
| RHD4CZ5C051ST3500 |  | Finishing, Benching, Testing works for MH 1200 mm - (RD-C-5 /1)-Z5-C051-ST | 3d | 2026-08-24 | 2026-08-26 | RHD4CZ5C051ST3400, RHD4CZ5C051ST3501 |
|  | 3930 | **RHD4-02-002-C051-(ST)-GRP Pipes - 900 mm diameter** |  |  |  |  |
|  | 3928 | **RHD4-02-002-C051-(ST)-GRP Pipes - 700 mm diameter** |  | 2026-07-28 | 2026-08-08 |  |
| RHD4CZ5C051ST1103 |  | Excavation works for GRP Pipe Line 700 mm - (RD-C-5 /1)-Z5-C051-ST | 2d | 2026-07-28 | 2026-07-29 | RHD4ENSDZ5APPST110, RHD4CZ5C051ST3100 |
| RHD4CZ5C051ST1203 |  | Bedding works for GRP Pipe Line 700 mm - (RD-C-5 /1)-Z5-C051-ST | 2d | 2026-07-30 | 2026-08-01 | RHD4CZ5C051ST1103 |
| RHD4CZ5C051ST1303 |  | Installing for GRP Pipe Line 700 mm - (RD-C-5 /1)-Z5-C051-ST | 2d | 2026-08-02 | 2026-08-03 | RHD4CZ5C051ST1203, RHD4PRSHLSTAGST1004, RHD4PRSHLDOSST1604, RHD4PRSHLPOST1000, RHD4PRSHLDOSST1004 |
| RHD4CZ5C051ST1403 |  | Primary Test for GRP Pipe Line 700 mm - (RD-C-5 /1)-Z5-C051-ST | 2d | 2026-08-04 | 2026-08-05 | RHD4CZ5C051ST1303 |
| RHD4CZ5C051ST1503 |  | Backfilling and warning tape works for GRP Pipe Line 700 mm - (RD-C-5 /1)-Z5-C051-ST | 2d | 2026-08-06 | 2026-08-08 | RHD4CZ5C051ST1403 |
|  | 3927 | **RHD4-02-002-C051-(ST)-GRP Pipes - 600 mm diameter** |  | 2026-07-30 | 2026-08-16 |  |
| RHD4CZ5C051ST1102 |  | Excavation works for GRP Pipe Line 600 mm - (RD-C-5 /1)-Z5-C051-ST | 3d | 2026-07-30 | 2026-08-02 | RHD4CZ5C051ST1103, RHD4ENSDZ5APPST110 |
| RHD4CZ5C051ST1202 |  | Bedding works for GRP Pipe Line 600 mm - (RD-C-5 /1)-Z5-C051-ST | 3d | 2026-08-03 | 2026-08-05 | RHD4CZ5C051ST1102 |
| RHD4CZ5C051ST1302 |  | Installing for GRP Pipe Line 600 mm - (RD-C-5 /1)-Z5-C051-ST | 3d | 2026-08-06 | 2026-08-09 | RHD4CZ5C051ST1202, RHD4PRSHLSTAGST1004, RHD4PRSHLDOSST1604, RHD4PRSHLPOST1000, RHD4PRSHLDOSST1004 |
| RHD4CZ5C051ST1402 |  | Primary Test for GRP Pipe Line 600 mm - (RD-C-5 /1)-Z5-C051-ST | 3d | 2026-08-10 | 2026-08-12 | RHD4CZ5C051ST1302 |
| RHD4CZ5C051ST1502 |  | Backfilling and warning tape works for GRP Pipe Line 600 mm - (RD-C-5 /1)-Z5-C051-ST | 3d | 2026-08-13 | 2026-08-16 | RHD4CZ5C051ST1402 |
|  | 2413 | **RHD4-02-002-C051-(ST)-GRP Pipes - 500 mm diameter** |  | 2026-08-03 | 2026-08-13 |  |
| RHD4CZ5C051ST1101 |  | Excavation works for GRP Pipe Line 500 mm - (RD-C-5 /1)-Z5-C051-ST | 2d | 2026-08-03 | 2026-08-04 | RHD4CZ5C051ST1102 |
| RHD4CZ5C051ST1201 |  | Bedding works for GRP Pipe Line 500 mm - (RD-C-5 /1)-Z5-C051-ST | 2d | 2026-08-05 | 2026-08-06 | RHD4CZ5C051ST1101 |
| RHD4CZ5C051ST1301 |  | Installing for GRP Pipe Line 500 mm - (RD-C-5 /1)-Z5-C051-ST | 2d | 2026-08-08 | 2026-08-09 | RHD4CZ5C051ST1201 |
| RHD4CZ5C051ST1401 |  | Primary Test for GRP Pipe Line 500 mm - (RD-C-5 /1)-Z5-C051-ST | 2d | 2026-08-10 | 2026-08-11 | RHD4CZ5C051ST1301 |
| RHD4CZ5C051ST1501 |  | Backfilling and warning tape works for GRP Pipe Line 500 mm - (RD-C-5 /1)-Z5-C051-ST | 2d | 2026-08-12 | 2026-08-13 | RHD4CZ5C051ST1401 |
|  | 2994 | **RHD4-02-002-C051-(ST)-UPVC Pipes - 400 mm diameter** |  | 2026-07-30 | 2026-08-10 |  |
| RHD4CZ5C051ST2101 |  | Excavation works for UPVC Pipe Line 400 mm - (RD-C-5 /1)-Z5-C051-ST | 2d | 2026-07-30 | 2026-08-01 | RHD4CZ5C051ST1103 |
| RHD4CZ5C051ST2201 |  | Bedding works for UPVC Pipe Line 400 mm - (RD-C-5 /1)-Z5-C051-ST | 2d | 2026-08-02 | 2026-08-03 | RHD4CZ5C051ST2101 |
| RHD4CZ5C051ST2301 |  | Installing for UPVC Pipe Line 400 mm - (RD-C-5 /1)-Z5-C051-ST | 2d | 2026-08-04 | 2026-08-05 | RHD4CZ5C051ST2201 |
| RHD4CZ5C051ST2401 |  | Primary Test for UPVC Pipe Line 400 mm - (RD-C-5 /1)-Z5-C051-ST | 2d | 2026-08-06 | 2026-08-08 | RHD4CZ5C051ST2301 |
| RHD4CZ5C051ST2501 |  | Backfilling and warning tape works for UPVC Pipe Line 400 mm - (RD-C-5 /1)-Z5-C051-ST | 2d | 2026-08-09 | 2026-08-10 | RHD4CZ5C051ST2401 |
|  | 3939 | **RHD4-02-002-C051-(ST)-UPVC Pipes - 300 mm diameter** |  | 2026-07-30 | 2026-08-19 |  |
| RHD4CZ5C051ST2100 |  | Excavation works for UPVC Pipe Line 300 mm - (RD-C-5 /1)-Z5-C051-ST | 3d | 2026-07-30 | 2026-08-02 | RHD4ENSDZ5APPST110, RHD4CZ5C051ST2101 SS |
| RHD4CZ5C051ST2200 |  | Bedding works for UPVC Pipe Line 300 mm - (RD-C-5 /1)-Z5-C051-ST | 3d | 2026-08-03 | 2026-08-05 | RHD4CZ5C051ST2100 |
| RHD4CZ5C051ST2300 |  | Installing for UPVC Pipe Line 300 mm - (RD-C-5 /1)-Z5-C051-ST | 3d | 2026-08-11 | 2026-08-13 | RHD4CZ5C051ST2200, RHD4PRSHLDOSST1104, RHD4PRSHLSTAGST1104, RHD4CZ5C051ST2501 |
| RHD4CZ5C051ST2400 |  | Primary Test for UPVC Pipe Line 300 mm - (RD-C-5 /1)-Z5-C051-ST | 2d | 2026-08-15 | 2026-08-16 | RHD4CZ5C051ST2300 |
| RHD4CZ5C051ST2500 |  | Backfilling and warning tape works for UPVC Pipe Line 300 mm - (RD-C-5 /1)-Z5-C051-ST | 3d | 2026-08-17 | 2026-08-19 | RHD4CZ5C051ST2400, RHD4CZ5C051ST6100, RHD4CZ5C051ST1502, RHD4CZ5C051ST1503 |
|  | 3947 | **RHD4-02-002-C051-(ST)-Concrete Encasement** |  | 2026-08-12 | 2026-08-13 |  |
| RHD4CZ5C051ST6100 |  | Pipe Encasement for Storm Pipelines - (RD-C-5 /1)-Z5-C051-ST | 2d | 2026-08-12 | 2026-08-13 | RHD4CZ5C051ST2300 SS, RHD4CZ5C051ST2300 FF, RHD4CZ5C051ST2200 |
|  | 3948 | **RHD4-02-002-Z5-C051-Catch Basin - ST** |  | 2026-08-03 | 2026-09-02 |  |
|  | 3949 | **RHD4-02-002-C051-(ST)-Single Catch Basin Works** |  | 2026-08-03 | 2026-09-02 |  |
| RHD4CZ5C051ST7100 |  | Excavation works for Single Catch Basin - (RD-C-5 /1)-Z5-C051-ST | 3d | 2026-08-03 | 2026-08-05 | RHD4ENSDZ5APPST110, RHD4CZ5C051ST2100 |
| RHD4CZ5C051ST7200 |  | PC Blinding, Installation and Pipe connection for Single Catch Basin - (RD-C-5 /1)-Z5-C051-ST | 3d | 2026-08-06 | 2026-08-09 | RHD4CZ5C051ST7100 |
| RHD4CZ5C051ST7300 |  | Rings & C.Slab & Final Backfill for Single Catch Basin - (RD-C-5 /1)-Z5-C051-ST | 4d | 2026-08-10 | 2026-08-13 | RHD4CZ5C051ST7200, RHD4PRSHLDOSST1304, RHD4PRSHLSTAGST1304 |
| RHD4CZ5C051ST7400 |  | Steel Cover for Single Catch Basin - (RD-C-5 /1)-Z5-C051-ST | 3d | 2026-08-15 | 2026-08-17 | RHD4CZ5C051ST7300, RHD4PRSHLDOSST1704 |
| RHD4CZ5C051ST7500 |  | Finishing and Insulation works for Single Catch Basin - (RD-C-5 /1)-Z5-C051-ST | 6d | 2026-08-27 | 2026-09-02 | RHD4CZ5C051ST7400, RHD4CZ5C051ST3500 |
|  | 6409 | **RHD4-02-002-C051-(ST)-Double Catch Basin Works** |  | 2026-08-03 | 2026-08-13 |  |
| RHD4CZ5C051ST8100 |  | Excavation works for Double Catch Basin - (RD-C-5 /1)-Z5-C051-ST | 2d | 2026-08-03 | 2026-08-04 | RHD4CZ5C051ST2100 |
| RHD4CZ5C051ST8200 |  | PC Blinding, Installation and Pipe connection for Double Catch Basin - (RD-C-5 /1)-Z5-C051-ST | 2d | 2026-08-05 | 2026-08-06 | RHD4CZ5C051ST8100 |
| RHD4CZ5C051ST8300 |  | Rings & C.Slab & Final Backfillfor Double Catch Basin - (RD-C-5 /1)-Z5-C051-ST | 2d | 2026-08-08 | 2026-08-09 | RHD4CZ5C051ST8200 |
| RHD4CZ5C051ST8400 |  | Steel Cover for Double Catch Basin - (RD-C-5 /1)-Z5-C051-ST | 2d | 2026-08-10 | 2026-08-11 | RHD4CZ5C051ST8300 |
| RHD4CZ5C051ST8500 |  | Finishing and Insulation works for Double Catch Basin - (RD-C-5 /1)-Z5-C051-ST | 2d | 2026-08-12 | 2026-08-13 | RHD4CZ5C051ST8400 |
|  | 3973 | **RHD4-02-002-Z5-C051-Sewage Network - SW** |  | 2026-08-27 | 2026-10-08 |  |
|  | 957 | **RHD4-02-002-C051-(SW)-MH Works - 1200 mm diameter with Back drop** |  | 2026-08-27 | 2026-09-07 |  |
| RHD4CZ5C051SW3101 |  | Excavation and PC Blinding works for MH 1200 mm - (RD-C-5 /1)-Z5-C051-SW | 2d | 2026-08-27 | 2026-08-29 | RHD4CZ5C051ST2100, RHD4CZ5C051ST3500 |
| RHD4CZ5C051SW3201 |  | Installation of Base for MH 1200 mm - (RD-C-5 /1)-Z5-C051-SW | 2d | 2026-08-30 | 2026-08-31 | RHD4CZ5C051SW3101 |
| RHD4CZ5C051SW3301 |  | MH Ring and C.Slab works and Backfilling works for MH 1200 mm - (RD-C-5 /1)-Z5-C051-SW | 2d | 2026-09-01 | 2026-09-02 | RHD4CZ5C051SW3201 |
| RHD4CZ5C051SW3401 |  | Steel Cover for MH 1200 mm - (RD-C-5 /1)-Z5-C051-SW | 2d | 2026-09-03 | 2026-09-05 | RHD4CZ5C051SW3301 |
| RHD4CZ5C051SW3501 |  | Finishing, Benching, Testing works for MH 1200 mm - (RD-C-5 /1)-Z5-C051-SW | 2d | 2026-09-06 | 2026-09-07 | RHD4CZ5C051SW3401 |
|  | 3794 | **RHD4-02-002-C051-(SW)-MH Works - 1200 mm diameter** |  | 2026-09-03 | 2026-10-08 |  |
| RHD4CZ5C051SW3100 |  | Excavation and PC Blinding works for MH 1200 mm - (RD-C-5 /1)-Z5-C051-SW | 5d | 2026-09-03 | 2026-09-08 | RHD4CZ5C051SW2100 |
| RHD4CZ5C051SW3200 |  | Installation of Base for MH 1200 mm - (RD-C-5 /1)-Z5-C051-SW | 7d | 2026-09-09 | 2026-09-16 | RHD4CZ5C051SW3100 |
| RHD4CZ5C051SW3300 |  | MH Ring and C.Slab works and Backfilling works for MH 1200 mm - (RD-C-5 /1)-Z5-C051-SW | 7d | 2026-09-17 | 2026-09-26 | RHD4CZ5C051SW3200 |
| RHD4CZ5C051SW3400 |  | Steel Cover for MH 1200 mm - (RD-C-5 /1)-Z5-C051-SW | 4d | 2026-09-27 | 2026-09-30 | RHD4CZ5C051SW3300 |
| RHD4CZ5C051SW3500 |  | Finishing, Benching, Testing works for MH 1200 mm - (RD-C-5 /1)-Z5-C051-SW | 7d | 2026-10-01 | 2026-10-08 | RHD4CZ5C051SW3400 |
|  | 3979 | **RHD4-02-002-C051-(SW)-UPVC Pipes - 200 mm diameter** |  | 2026-08-30 | 2026-09-20 |  |
| RHD4CZ5C051SW2100 |  | Excavation works for UPVC Pipe Line 200 mm - (RD-C-5 /1)-Z5-C051-SW | 4d | 2026-08-30 | 2026-09-02 | RHD4ENSDZ5APPSW120, RHD4CZ5C051SW3101 |
| RHD4CZ5C051SW2200 |  | Bedding works for UPVC Pipe Line 200 mm - (RD-C-5 /1)-Z5-C051-SW | 4d | 2026-09-03 | 2026-09-07 | RHD4CZ5C051SW2100 |
| RHD4CZ5C051SW2300 |  | Installing for UPVC Pipe Line 200 mm - (RD-C-5 /1)-Z5-C051-SW | 4d | 2026-09-08 | 2026-09-12 | RHD4CZ5C051SW2200, RHD4PRSHLSTAGSW1004, RHD4CZ5C051ST1501, RHD4PRSHLPOSW1000, RHD4PRSHLDOSSW1004, RHD4PRSHLDOSSW1304, RHD4PRSHLPOSW1100, RHD4PRSHLDOSSW1104 |
| RHD4CZ5C051SW2400 |  | Primary Test for UPVC Pipe Line 200 mm - (RD-C-5 /1)-Z5-C051-SW | 3d | 2026-09-13 | 2026-09-15 | RHD4CZ5C051SW2300 |
| RHD4CZ5C051SW2500 |  | Backfilling and warning tape works for UPVC Pipe Line 200 mm - (RD-C-5 /1)-Z5-C051-SW | 4d | 2026-09-16 | 2026-09-20 | RHD4CZ5C051SW2400 |

| ID | WBS | Task | Duration | Start | Finish | Predecessors |
| --- | --- | --- | --- | --- | --- | --- |
|  | 4010 | **RHD4-02-002-Z5-C051-Potable Network - PT** |  | 2026-09-21 | 2026-10-24 |  |
|  | 4011 | **RHD4-02-002-C051-(PT)-HDPE Pipes - 110 mm diameter** |  | 2026-10-10 | 2026-10-20 |  |
| RHD4CZ5C051PT1100 |  | Excavation works for HDPE Pipline 110 mm - (RD-C-5 /1)-Z5-C051-PT | 2d | 2026-10-10 | 2026-10-11 | RHD4CZ5C051SW2500, RHD4ENSDZ5APPPT130, RHD4ENMSPT2000, RHD4CZ5C051SW3300, RHD4CZ5C051SW3500 |
| RHD4CZ5C051PT1200 |  | Bedding works for HDPE Pipline 110 mm - (RD-C-5 /1)-Z5-C051-PT | 2d | 2026-10-12 | 2026-10-13 | RHD4CZ5C051PT1100 |
| RHD4CZ5C051PT1300 |  | Installing for HDPE Pipline 110 mm - (RD-C-5 /1)-Z5-C051-PT | 2d | 2026-10-14 | 2026-10-15 | RHD4CZ5C051PT1200, RHD4PRSHLDOSPT1000, RHD4PRSHLSTAGPT1000 |
| RHD4CZ5C051PT1400 |  | Primary Test for HDPE Pipline 110 mm - (RD-C-5 /1)-Z5-C051-PT | 2d | 2026-10-17 | 2026-10-18 | RHD4CZ5C051PT1300 |
| RHD4CZ5C051PT1500 |  | Backfilling and warning tape works for HDPE Pipline 110 mm - (RD-C-5 /1)-Z5-C051-PT | 2d | 2026-10-19 | 2026-10-20 | RHD4CZ5C051PT1400 |
|  | 4012 | **RHD4-02-002-C051-(PT)-HDPE Pipes - 160 mm diameter** |  | 2026-09-21 | 2026-10-21 |  |
| RHD4CZ5C051PT1101 |  | Excavation works for HDPE Pipline 160 mm - (RD-C-5 /1)-Z5-C051-PT | 2d | 2026-09-21 | 2026-09-22 | RHD4CZ5C051SW2500, RHD4ENSDZ5APPPT130, RHD4ENMSPT2000 |
| RHD4CZ5C051PT1201 |  | Bedding works for HDPE Pipline 160 mm - (RD-C-5 /1)-Z5-C051-PT | 2d | 2026-09-24 | 2026-09-26 | RHD4CZ5C051PT1101 |
| RHD4CZ5C051PT1301 |  | Installing for HDPE Pipline 160 mm - (RD-C-5 /1)-Z5-C051-PT | 3d | 2026-09-27 | 2026-09-29 | RHD4CZ5C051PT1201, RHD4PRSHLDOSPT1000, RHD4PRSHLSTAGPT1000 |
| RHD4CZ5C051PT1401 |  | Primary Test for HDPE Pipline 160 mm - (RD-C-5 /1)-Z5-C051-PT | 2d | 2026-10-17 | 2026-10-18 | RHD4CZ5C051PT1301, RHD4CZ5C051PT3100 |
| RHD4CZ5C051PT1501 |  | Backfilling and warning tape works for HDPE Pipline 160 mm - (RD-C-5 /1)-Z5-C051-PT | 3d | 2026-10-19 | 2026-10-21 | RHD4CZ5C051PT1401 |
|  | 4016 | **RHD4-02-002-C051-(PT)-Gate Valves (Direct Buried)** |  | 2026-10-14 | 2026-10-24 |  |
| RHD4CZ5C051PT3100 |  | Installation for Direct Buried Gate Valves - (RD-C-5 /1)-Z5-C051-PT | 2d | 2026-10-14 | 2026-10-15 | RHD4CZ5C051PT1301 FF, RHD4CZ5C051PT1300 FF, RHD4CZ5C051PT1301 SS, RHD4CZ5C051PT1300 SS, RHD4PRSHLDOSPT1200, RHD4PRSHLSTAGPT1200 |
| RHD4CZ5C051PT3200 |  | Stem and Service box for Direct Buried Gate Valves - (RD-C-5 /1)-Z5-C051-PT | 2d | 2026-10-22 | 2026-10-24 | RHD4CZ5C051PT3100, RHD4CZ5C051PT1501, RHD4CZ5C051PT1500, RHD4PRSHLDOSPT1300, RHD4PRSHLSTAGPT1300, RHD4PRSHLSTAGSW1304 |
|  | 4021 | **RHD4-02-002-C051-(PT)-Air Valve Chambers** |  |  |  |  |
|  | 4022 | **RHD4-02-002-C051-(PT)-Air Valves** |  |  |  |  |
|  | 4023 | **RHD4-02-002-C051-(PT)-Fire Hydrant** |  |  |  |  |
|  | 4024 | **RHD4-02-002-C051-(PT)-Concrete Encasement** |  |  |  |  |
|  | 4025 | **RHD4-02-002-Z5-C051-Irrigation Network - IRR** |  | 2026-10-21 | 2026-11-17 |  |
|  | 4026 | **RHD4-02-002-C051-(IRR)-HDPE Pipes - 160 mm diameter** |  | 2026-10-21 | 2026-11-10 |  |
| RHD4CZ5C051IRR1100 |  | Excavation works for HDPE Pipline 160 mm - (RD-C-5 /1)-Z5-C051-IRR | 4d | 2026-10-21 | 2026-10-25 | RHD4CZ5C051PT1101, RHD4CZ5C051PT1100, RHD4ENSDZ5APPIRR140, RHD4ENMSRR2000, RHD4CZ5C051PT1500, RHD4CZ5C051RD3100, RHD4CZ5C051ST7500 |
| RHD4CZ5C051IRR1200 |  | Bedding works for HDPE Pipline 160 mm - (RD-C-5 /1)-Z5-C051-IRR | 4d | 2026-10-26 | 2026-10-29 | RHD4CZ5C051IRR1100 |
| RHD4CZ5C051IRR1300 |  | Installing for HDPE Pipline 160 mm - (RD-C-5 /1)-Z5-C051-IRR | 4d | 2026-10-31 | 2026-11-03 | RHD4CZ5C051IRR1200, RHD4PRSHLDOSIRR1000, RHD4PRSHLSTAGIRR1000 |
| RHD4CZ5C051IRR1400 |  | Primary Test for HDPE Pipline 160 mm - (RD-C-5 /1)-Z5-C051-IRR | 2d | 2026-11-04 | 2026-11-05 | RHD4CZ5C051IRR1300, RHD4CZ5C051IRR5100, RHD4CZ5C051IRR3100 |
| RHD4CZ5C051IRR1500 |  | Backfilling and warning tape works for HDPE Pipline 160 mm - (RD-C-5 /1)-Z5-C051-IRR | 4d | 2026-11-07 | 2026-11-10 | RHD4CZ5C051IRR1400 |
|  | 4034 | **RHD4-02-002-C051-(IRR)-Gate Valves (Direct Buried)** |  | 2026-11-02 | 2026-11-12 |  |
| RHD4CZ5C051IRR3100 |  | Installation for Direct Buried Gate Valves - (RD-C-5 /1)-Z5-C051-IRR | 2d | 2026-11-02 | 2026-11-03 | RHD4CZ5C051IRR1300 SS, RHD4CZ5C051IRR1300 FF, RHD4PRSHLDOSIRR1100, RHD4PRSHLSTAGIRR1100 |
| RHD4CZ5C051IRR3200 |  | Stem and Service box for Direct Buried Gate Valves - (RD-C-5 /1)-Z5-C051-IRR | 2d | 2026-11-11 | 2026-11-12 | RHD4CZ5C051IRR3100, RHD4CZ5C051IRR1500, RHD4PRSHLDOSIRR1300, RHD4PRSHLSTAGIRR1300 |
|  | 4037 | **RHD4-02-002-C051-(IRR)-Wash out Chamber** |  | 2026-11-04 | 2026-11-12 |  |
| RHD4CZ5C051IRR2101 |  | Excavation and Bedding for Wash out Chamber for Irrigation Network - (RD-C-5 /1)-Z5-C051-IRR | 2d | 2026-11-04 | 2026-11-05 | RHD4ENSDZ5APPIRR140, RHD4CZ5C051IRR3100 |
| RHD4CZ5C051IRR2201 |  | PC works for Wash out Chamber for Irrigation Network - (RD-C-5 /1)-Z5-C051-IRR | 2d | 2026-11-07 | 2026-11-08 | RHD4CZ5C051IRR2101 |
| RHD4CZ5C051IRR2301 |  | Installation for Wash out Chamber for Irrigation Network - (RD-C-5 /1)-Z5-C051-IRR | 2d | 2026-11-09 | 2026-11-10 | RHD4CZ5C051IRR2201, RHD4PRSHLDOSIRR1200, RHD4PRSHLDOSIRR1400, RHD4PRSHLSTAGIRR1200, RHD4PRSHLSTAGIRR1400 |
| RHD4CZ5C051IRR2401 |  | Backfilling works for Wash out Chamber for Irrigation Network - (RD-C-5 /1)-Z5-C051-IRR | 2d | 2026-11-11 | 2026-11-12 | RHD4CZ5C051IRR2301 |
|  | 4038 | **RHD4-02-002-C051-(IRR)-Wash out Valves** |  | 2026-11-11 | 2026-11-15 |  |
| RHD4CZ5C051IRR3102 |  | Installation for Wash out Valve for Irrigation Network - (RD-C-5 /1)-Z5-C051-IRR | 2d | 2026-11-11 | 2026-11-12 | RHD4CZ5C051IRR2301, RHD4PRSHLDOSIRR1100, RHD4PRSHLSTAGIRR1100 |
| RHD4CZ5C051IRR3202 |  | Stem and Service box for Wash out Valve for Irrigation Network - (RD-C-5 /1)-Z5-C051-IRR | 2d | 2026-11-14 | 2026-11-15 | RHD4CZ5C051IRR3102, RHD4CZ5C051IRR2401, RHD4PRSHLDOSIRR1300, RHD4PRSHLSTAGIRR1300 |
|  | 4039 | **RHD4-02-002-C051-(IRR)-Air Valve Chamber** |  | 2026-11-04 | 2026-11-12 |  |
| RHD4CZ5C051IRR2102 |  | Excavation and Bedding for Valve Chamber for Irrigation Network - (RD-C-5 /1)-Z5-C051-IRR | 2d | 2026-11-04 | 2026-11-05 | RHD4ENSDZ5APPIRR140, RHD4CZ5C051IRR3100 |
| RHD4CZ5C051IRR2202 |  | PC works for Valve Chamber for Irrigation Network - (RD-C-5 /1)-Z5-C051-IRR | 2d | 2026-11-07 | 2026-11-08 | RHD4CZ5C051IRR2102 |
| RHD4CZ5C051IRR2302 |  | Installation for Valve Chamber for Irrigation Network - (RD-C-5 /1)-Z5-C051-IRR | 2d | 2026-11-09 | 2026-11-10 | RHD4CZ5C051IRR2202, RHD4PRSHLDOSIRR1200, RHD4PRSHLDOSIRR1400, RHD4PRSHLSTAGIRR1200, RHD4PRSHLSTAGIRR1400 |
| RHD4CZ5C051IRR2402 |  | Backfilling works for Valve Chamber for Irrigation Network - (RD-C-5 /1)-Z5-C051-IRR | 2d | 2026-11-11 | 2026-11-12 | RHD4CZ5C051IRR2302 |
|  | 4040 | **RHD4-02-002-C051-(IRR)-Air Valves** |  | 2026-11-11 | 2026-11-17 |  |
| RHD4CZ5C051IRR3103 |  | Installation for Air Valves for Irrigation Network - (RD-C-5 /1)-Z5-C051-IRR | 2d | 2026-11-11 | 2026-11-12 | RHD4CZ5C051IRR2302, RHD4PRSHLDOSIRR1100, RHD4PRSHLSTAGIRR1100 |
| RHD4CZ5C051IRR3203 |  | Stem and Service box for Air Valves for Irrigation Network - (RD-C-5 /1)-Z5-C051-IRR | 2d | 2026-11-16 | 2026-11-17 | RHD4CZ5C051IRR3103, RHD4CZ5C051IRR2402, RHD4PRSHLDOSIRR1300, RHD4PRSHLSTAGIRR1300, RHD4CZ5C051IRR3202 |
|  | 4041 | **RHD4-02-002-C051-(IRR)-Concrete Encasement** |  | 2026-11-02 | 2026-11-03 |  |
| RHD4CZ5C051IRR5100 |  | Pipe Encasement for Irrigation Pipelines - (RD-C-5 /1)-Z5-C051-IRR | 2d | 2026-11-02 | 2026-11-03 | RHD4CZ5C051IRR1300 SS, RHD4CZ5C051IRR1300 FF, RHD4CZ5C051IRR1200 |
|  | 4059 | **RHD4-02-002-Z5-C051-Medium Voltage Network - MV** |  | 2026-12-19 | 2027-01-09 |  |
|  | 4060 | **RHD4-02-002-C051-(MV)-Medium Voltage cable trench** |  | 2026-12-19 | 2026-12-30 |  |
| RHD4CZ5C051MV1100 |  | Excavation for Medium Voltage Trench - (RD-C-5 /1)-Z5-C051-MV | 2d | 2026-12-19 | 2026-12-20 | RHD4ENSDZ5APPMV150, RHD4CZ5C051RD3100, RHD4CZ6C052MV3401 |
| RHD4CZ5C051MV1200 |  | Trench Backfilling for Medium Voltage Network - (RD-C-5 /1)-Z5-C051-MV | 2d | 2026-12-29 | 2026-12-30 | RHD4CZ5C051MV3200 |
|  | 4061 | **RHD4-02-002-C051-(MV)-Medium Voltage duct banks** |  | 2026-12-31 | 2027-01-09 |  |
| RHD4CZ5C051MV2100 |  | Excavation of Duct Banks for Medium Voltage Network - (RD-C-5 /1)-Z5-C051-MV | 2d | 2026-12-31 | 2027-01-02 | RHD4ENSDZ5APPMV150, RHD4CZ5C051MV1200 |
| RHD4CZ5C051MV2200 |  | Installation of Duct Banks for Medium Voltage Network - (RD-C-5 /1)-Z5-C051-MV | 2d | 2027-01-03 | 2027-01-04 | RHD4CZ5C051MV2100, RHD4PRSHLDOSMV1000, RHD4PRSHLSTAGMV1000 |
| RHD4CZ5C051MV2300 |  | Pouring of Duct Banks for Medium Voltage Network - (RD-C-5 /1)-Z5-C051-MV | 2d | 2027-01-05 | 2027-01-06 | RHD4CZ5C051MV2200 |
| RHD4CZ5C051MV2400 |  | Backfilling of Duct Banks for Medium Voltage Network - (RD-C-5 /1)-Z5-C051-MV | 2d | 2027-01-07 | 2027-01-09 | RHD4CZ5C051MV2300 |
|  | 4062 | **RHD4-02-002-C051-(MV)-Medium Voltage cables 3Cx 500 mm²** |  | 2026-12-21 | 2027-01-02 |  |
| RHD4CZ5C051MV3100 |  | Installation of Medium Voltage Cables 3Cx 500 mm² - (RD-C-5 /1)-Z5-C051-MV | 5d | 2026-12-21 | 2026-12-26 | RHD4CZ5C051MV1100, RHD4PRSHLDOSMV1100, RHD4ENMSMV2000, RHD4ENMSMV2010, RHD4PRSHLSTAGMV1100 |
| RHD4CZ5C051MV3200 |  | Joints Installation of Medium Voltage Cables 3Cx 500 mm² - (RD-C-5 /1)-Z5-C051-MV | 2d | 2026-12-27 | 2026-12-28 | RHD4CZ5C051MV3100, RHD4PRSHLDOSMV1300, RHD4PRSHLSTAGMV1300 |
| RHD4CZ5C051MV3300 |  | Testing of Medium Voltage Cables 3Cx 500 mm² - (RD-C-5 /1)-Z5-C051-MV | 2d | 2026-12-31 | 2027-01-02 | RHD4CZ5C051MV3200, RHD4CZ5C051MV1200 |
|  | 4066 | **RHD4-02-002-Z5-C051-Low Voltage Network - LV** |  | 2026-11-18 | 2026-12-31 |  |
|  | 4067 | **RHD4-02-002-C051-(LV)-Low Voltage duct banks** |  | 2026-11-18 | 2026-12-03 |  |
| RHD4CZ5C051LV2100 |  | Excavation of Duct Banks for Low Voltage Network - (RD-C-5 /1)-Z5-C051-LV | 3d | 2026-11-18 | 2026-11-21 | RHD4CZ5C051RW3000, RHD4ENSDZ5APPLV160, RHD4CZ5C051IRR3203 |
| RHD4CZ5C051LV2200 |  | Installation of Duct Banks for Low Voltage Network - (RD-C-5 /1)-Z5-C051-LV | 5d | 2026-11-22 | 2026-11-26 | RHD4CZ5C051LV2100, RHD4PRSHLDOSLV1000, RHD4PRSHLSTAGLV1000 |
| RHD4CZ5C051LV2300 |  | Pouring of Duct Banks for Low Voltage Network - (RD-C-5 /1)-Z5-C051-LV | 3d | 2026-11-28 | 2026-11-30 | RHD4CZ5C051LV2200 |
| RHD4CZ5C051LV2400 |  | Backfilling of Duct Banks for Low Voltage Network - (RD-C-5 /1)-Z5-C051-LV | 3d | 2026-12-01 | 2026-12-03 | RHD4CZ5C051LV2300 |
|  | 4068 | **RHD4-02-002-C051-(LV)-Low Voltage Drawpit** |  | 2026-12-01 | 2026-12-05 |  |
| RHD4CZ5C051LV5100 |  | Excavation of Drawpit size 900x900x1000mm for Low Voltage Network - (RD-C-5 /1)-Z5-C051-LV | 2d | 2026-12-01 | 2026-12-02 | RHD4ENSDZ5APPLV160, RHD4CZ6C052SL6100 |
| RHD4CZ5C051LV5200 |  | Installation of Drawpit size 900x900x1000mm for Low Voltage Network - (RD-C-5 /1)-Z5-C051-LV | 2d | 2026-12-03 | 2026-12-05 | RHD4CZ5C051LV5100, RHD4PRSHLDOSLV1400, RHD4PRSHLSTAGLV1400 |

| ID | WBS | Task | Duration | Start | Finish | Predecessors |
| --- | --- | --- | --- | --- | --- | --- |
|  | 4069 | **RHD4-02-002-C051-(LV)-Low Voltage cables** |  | 2026-12-06 | 2026-12-31 |  |
| RHD4CZ5C051LV3100 |  | Excavation for Low Voltage Cables for Low Voltage Network - (RD-C-5 /1)-Z5-C051-LV | 7d | 2026-12-06 | 2026-12-13 | RHD4ENSDZ5APPLV160, RHD4CZ5C051LV5200, RHD4CZ5C051LV2400 |
| RHD4CZ5C051LV3200 |  | Cable Laying of Low Voltage Cables for Low Voltage Network - (RD-C-5 /1)-Z5-C051-LV | 6d | 2026-12-14 | 2026-12-20 | RHD4CZ5C051LV3100, RHD4PRSHLDOSLV1100, RHD4ENMSLV2000, RHD4ENMSLV2010, RHD4PRSHLSTAGLV1100 |
| RHD4CZ5C051LV3300 |  | Warning tape and Backfill for Low Voltage Cables for Low Voltage Network - (RD-C-5 /1)-Z5-C051-LV | 6d | 2026-12-21 | 2026-12-27 | RHD4CZ5C051LV3200 |
| RHD4CZ5C051LV3400 |  | Testing of Low Voltage Cables for Low Voltage Network - (RD-C-5 /1)-Z5-C051-LV | 4d | 2026-12-28 | 2026-12-31 | RHD4CZ5C051LV3300 |
|  | 4072 | **RHD4-02-002-Z5-C051-Street Lighting Network - SL** |  | 2027-01-02 | 2027-01-31 |  |
|  | 4075 | **RHD4-02-002-C051-(SL)-Street Lighting cables** |  | 2027-01-02 | 2027-01-14 |  |
| RHD4CZ5C051SL3100 |  | Excavation for Street Lighting Cables for Street Lighting Network - (RD-C-5 /1)-Z5-C051-SL | 4d | 2027-01-02 | 2027-01-05 | RHD4ENSDZ5APPSL170, RHD4CZ5C051LV3400 |
| RHD4CZ5C051SL3200 |  | Cable Laying of Street Lighting Cables for Street Lighting Network - (RD-C-5 /1)-Z5-C051-SL | 3d | 2027-01-06 | 2027-01-09 | RHD4CZ5C051SL3100, RHD4PRSHLDOSSL1100, RHD4ENMSSL2000, RHD4ENMSSL2010, RHD4PRSHLSTAGSL1100 |
| RHD4CZ5C051SL3300 |  | Warning tape and Backfill for Street Lighting Cables for Street Lighting Network - (RD-C-5 /1)-Z5-C051-SL | 3d | 2027-01-10 | 2027-01-12 | RHD4CZ5C051SL3200 |
| RHD4CZ5C051SL3400 |  | Testing of Street Lighting Cables for Street Lighting Network - (RD-C-5 /1)-Z5-C051-SL | 2d | 2027-01-13 | 2027-01-14 | RHD4CZ5C051SL3300 |
|  | 4076 | **RHD4-02-002-C051-(SL)-Street Lighting Poles** |  | 2027-01-16 | 2027-01-31 |  |
| RHD4CZ5C051SL1100 |  | Excavation for RC Base for Lighting Poles for Street Lighting Network - (RD-C-5 /1)-Z5-C051-SL | 2d | 2027-01-16 | 2027-01-17 | RHD4ENSDZ5APPSL170, RHD4CZ5C051IRR3203, RHD4CZ5C051SL3400 |
| RHD4CZ5C051SL1200 |  | Installation for RC Base for Lighting Poles for Street Lighting Network - (RD-C-5 /1)-Z5-C051-SL | 2d | 2027-01-18 | 2027-01-19 | RHD4CZ5C051SL1100 |
| RHD4CZ5C051SL1300 |  | Backfill for RC Base for Lighting Poles for Street Lighting Network - (RD-C-5 /1)-Z5-C051-SL | 2d | 2027-01-20 | 2027-01-21 | RHD4CZ5C051SL1200 |
| RHD4CZ5C051SL1400 |  | Installation for Lighting Poles for Street Lighting Network - (RD-C-5 /1)-Z5-C051-SL | 3d | 2027-01-23 | 2027-01-25 | RHD4CZ5C051SL1300, RHD4PRSHLDOSSL1200, RHD4ENMSSL2000, RHD4ENMSSL2010, RHD4PRSHLSTAGSL1200 |
| RHD4CZ5C051SL1500 |  | Luminaire Installation for Lighting Poles for Street Lighting Network - (RD-C-5 /1)-Z5-C051-SL | 3d | 2027-01-28 | 2027-01-31 | RHD4CZ5C051SL1400, RHD4CZ5C051SL6100, RHD4PRSHLDOSSL1300, RHD4PRSHLSTAGSL1300 |
|  | 4078 | **RHD4-02-002-C051-(SL)-Street Lighting Earthing System** |  | 2027-01-26 | 2027-01-27 |  |
| RHD4CZ5C051SL6100 |  | Installation of Earthing for Lighting Poles and Fedder Pillers for Street Lighting Network - (RD-C-5 /1)-Z5-C051-SL | 2d | 2027-01-26 | 2027-01-27 | RHD4CZ5C051SL1400, RHD4ENMSER2000, RHD4ENMSER2010 |
|  | 5023 | **RHD4-02-002-C051-(SL)-Street Lighting Feeder Pillars** |  |  |  |  |
|  | 4084 | **RHD4-02-002-Z5-C051-Telecommunications Network - TC** |  | 2026-07-28 | 2027-03-17 |  |
|  | 4085 | **RHD4-02-002-C051-(TC)-Telecommunications Ducts** |  | 2027-02-01 | 2027-03-04 |  |
| RHD4CZ5C051TC2100 |  | Excavation of HDPE Ducts for Telecom Network - (RD-C-5 /1)-Z5-C051-TC | 8d | 2027-02-01 | 2027-02-09 | RHD4ENSDZ5APPTC190, RHD4CZ5C051SL1500, RHD4CZ5C051MV2400, RHD4CZ5C051MV3300 |
| RHD4CZ5C051TC2200 |  | Installation of HDPE Ducts for Telecom Network - (RD-C-5 /1)-Z5-C051-TC | 11d | 2027-02-10 | 2027-02-23 | RHD4CZ5C051TC2100, RHD4PRSHLDOSTC1000, RHD4PRSHLSTAGTC1000 |
| RHD4CZ5C051TC2400 |  | Backfilling of HDPE Ducts for Telecom Network - (RD-C-5 /1)-Z5-C051-TC | 8d | 2027-02-24 | 2027-03-04 | RHD4CZ5C051TC2200 |
|  | 4086 | **RHD4-02-002-C051-(TC)-Telecommunications Manholes** |  | 2027-03-06 | 2027-03-17 |  |
| RHD4CZ5C051TC5100 |  | Excavation for Manholes for Telecom Network - (RD-C-5 /1)-Z5-C051-TC | 4d | 2027-03-06 | 2027-03-13 | RHD4ENSDZ5APPTC190, RHD4CZ5C051TC2400 |
| RHD4CZ5C051TC5200 |  | Installation of Manholes for Telecom Network - (RD-C-5 /1)-Z5-C051-TC | 4d | 2027-03-14 | 2027-03-17 | RHD4CZ5C051TC5100, RHD4CZ5C051TC2200 SS, RHD4PRSHLDOSTC1200, RHD4PRSHLSTAGTC1200 |
|  | 4087 | **RHD4-02-002-C051-(TC)-Telecomminications Road Crossings** |  | 2026-07-28 | 2026-08-05 |  |
| RHD4CZ5C051TC3100 |  | Excavation for Road Crossings for Telecom Network - (RD-C-5 /1)-Z5-C051-TC | 2d | 2026-07-28 | 2026-07-29 | RHD4ENSDZ5APPTC190, RHD4CZ5C051ST3101 |
| RHD4CZ5C051TC3200 |  | Installation of Road Crossings for Telecom Network - (RD-C-5 /1)-Z5-C051-TC | 2d | 2026-07-30 | 2026-08-01 | RHD4CZ5C051TC3100, RHD4PRSHLDOSTC1100, RHD4PRSHLSTAGTC1100 |
| RHD4CZ5C051TC3300 |  | Pouring of Road Crossings for Telecom Network - (RD-C-5 /1)-Z5-C051-TC | 2d | 2026-08-02 | 2026-08-03 | RHD4CZ5C051TC3200 |
| RHD4CZ5C051TC3400 |  | Backfilling of Road Crossings for Telecom Network - (RD-C-5 /1)-Z5-C051-TC | 2d | 2026-08-04 | 2026-08-05 | RHD4CZ5C051TC3300 |
|  | 4088 | **RHD4-02-002-Z5-C051-Information and Communication Technologies - ICT** |  | 2026-07-30 | 2027-04-14 |  |
|  | 4089 | **RHD4-02-002-C051-(ICT)-Information and Communication Technologies Ducts** |  | 2027-03-18 | 2027-04-14 |  |
| RHD4CZ5C051ICT2100 |  | Excavation of HDPE Ducts for ICT Network - (RD-C-5 /1)-Z5-C051-ICT | 7d | 2027-03-18 | 2027-03-25 | RHD4CZ5C051ICT3400, RHD4ENSDZ5APPICT200, RHD4CZ5C051TC5200 |
| RHD4CZ5C051ICT2200 |  | Installation of HDPE Ducts for ICT Network - (RD-C-5 /1)-Z5-C051-ICT | 10d | 2027-03-27 | 2027-04-06 | RHD4CZ5C051ICT2100, RHD4PRSHLDOSICT1000, RHD4PRSHLSTAGICT1000 |
| RHD4CZ5C051ICT2400 |  | Backfilling of HDPE Ducts for ICT Network - (RD-C-5 /1)-Z5-C051-ICT | 7d | 2027-04-07 | 2027-04-14 | RHD4CZ5C051ICT2200 |
|  | 4090 | **RHD4-02-002-C051-(ICT)-Information and Communication Technologies Manholes** |  | 2027-03-27 | 2027-04-01 |  |
| RHD4CZ5C051ICT5100 |  | Excavation for Manholes for ICT Network - (RD-C-5 /1)-Z5-C051-ICT | 3d | 2027-03-27 | 2027-03-29 | RHD4CZ5C051ICT2100, RHD4ENSDZ5APPICT200 |
| RHD4CZ5C051ICT5200 |  | Installation of Manholes for ICT Network - (RD-C-5 /1)-Z5-C051-ICT | 3d | 2027-03-30 | 2027-04-01 | RHD4CZ5C051ICT5100, RHD4PRSHLDOSICT1200, RHD4PRSHLSTAGICT1200 |
|  | 4091 | **RHD4-02-002-C051-(ICT)-Information and Communication Technologies Road Crossings** |  | 2026-07-30 | 2026-08-23 |  |
| RHD4CZ5C051ICT3100 |  | Excavation for Road Crossings for ICT Network - (RD-C-5 /1)-Z5-C051-ICT | 2d | 2026-07-30 | 2026-08-01 | RHD4ENSDZ5APPICT200, RHD4CZ5C051TC3100 |
| RHD4CZ5C051ICT3200 |  | Installation of Road Crossings for ICT Network - (RD-C-5 /1)-Z5-C051-ICT | 2d | 2026-08-17 | 2026-08-18 | RHD4CZ5C051ICT3100, RHD4PRSHLDOSICT1100, RHD4PRSHLSTAGICT1100 |
| RHD4CZ5C051ICT3300 |  | Pouring of Road Crossings for ICT Network - (RD-C-5 /1)-Z5-C051-ICT | 2d | 2026-08-19 | 2026-08-20 | RHD4CZ5C051ICT3200 |
| RHD4CZ5C051ICT3400 |  | Backfilling of Road Crossings for ICT Network - (RD-C-5 /1)-Z5-C051-ICT | 2d | 2026-08-22 | 2026-08-23 | RHD4CZ5C051ICT3300 |
|  | 4079 | **RHD4-02-002-Z5-C051-Landscape Network - LS** |  |  |  |  |
|  | 4080 | **RHD4-02-002-C051-(LS)-Landscape Lighting cables** |  |  |  |  |
|  | 4081 | **RHD4-02-002-C051-(LS)-Landscape Feeder Pillars** |  |  |  |  |
|  | 4082 | **RHD4-02-002-C051-(LS)-Landscape Bollard Poles** |  |  |  |  |
|  | 4083 | **RHD4-02-002-C051-(LS)-Landscape Feeder Pillars Earthing** |  |  |  |  |
|  | 4092 | **RHD4-02-002-Z5-C051-Security Network - CCTV** |  | 2027-04-15 | 2027-06-01 |  |
|  | 4093 | **RHD4-02-002-C051-(CCTV)-Civil Works** |  | 2027-04-15 | 2027-04-26 |  |
| RHD4CZ5C051CCTV2100 |  | Civil Works for Security Network - (RD-C-5 /1)-Z5-C051-CCTV | 10d | 2027-04-15 | 2027-04-26 | RHD4CZ5C051ICT2400, RHD4CZ5C051ICT5200 |
|  | 4851 | **RHD4-02-002-A015-(CCTV)-CCTV Poles** |  | 2027-04-27 | 2027-05-08 |  |
| RHD4CZ5C051CCTV1100 |  | Excavation for RC Base for CCTV Poles for Security Network - (RD-C-5 /1)-Z5-C051-CCTV | 2d | 2027-04-27 | 2027-04-28 | RHD4CZ5C051CCTV2100 |
| RHD4CZ5C051CCTV1200 |  | Installation for RC Base for CCTV Poles for Security Network - (RD-C-5 /1)-Z5-C051-CCTV | 2d | 2027-04-29 | 2027-05-01 | RHD4CZ5C051CCTV1100 |
| RHD4CZ5C051CCTV1300 |  | Backfill for RC Base for CCTV Poles for Security Network - (RD-C-5 /1)-Z5-C051-CCTV | 2d | 2027-05-02 | 2027-05-03 | RHD4CZ5C051CCTV1200 |
| RHD4CZ5C051CCTV1400 |  | Installation for CCTV Poles for Security Network - (RD-C-5 /1)-Z5-C051-CCTV | 2d | 2027-05-04 | 2027-05-05 | RHD4CZ5C051CCTV1300 |
| RHD4CZ5C051CCTV1500 |  | Protection post Installation for CCTV Poles for Security Network - (RD-C-5 /1)-Z5-C051-CCTV | 2d | 2027-05-06 | 2027-05-08 | RHD4CZ5C051CCTV1400 |
|  | 4852 | **RHD4-02-002-A015-(CCTV)-Camera** |  | 2027-05-09 | 2027-05-10 |  |
| RHD4CZ5C051CCTV3100 |  | Installation for Cameras for Security Network - (RD-C-5 /1)-Z5-C051-CCTV | 2d | 2027-05-09 | 2027-05-10 | RHD4CZ5C051CCTV1400, RHD4CZ5C051CCTV4100 |
|  | 4853 | **RHD4-02-002-A015-(CCTV)-Power and Infrastructure** |  | 2027-05-06 | 2027-05-10 |  |
| RHD4CZ5C051CCTV4100 |  | Installation of Power outlet, UPS and midspan for PTZ Camerafor Cameras for Security Network - (RD-C-5 /1)-Z5-C051-CCTV | 2d | 2027-05-06 | 2027-05-08 | RHD4CZ5C051CCTV1400 |
| RHD4CZ5C051CCTV4200 |  | Short Range Wireless PoP wireless Bridgefor CCTV Poles for Security Network - (RD-L-16)-Z5-L016-CCTV | 2d | 2027-05-09 | 2027-05-10 | RHD4CZ5C051CCTV4100 |
|  | 4855 | **RHD4-02-002-A015-(CCTV)-CCTV Panels and Components** |  | 2027-05-11 | 2027-06-01 |  |
| RHD4CZ5C051CCTV6100 |  | Installation for CCTV Panels for Security Network - (RD-C-5 /1)-Z5-C051-CCTV | 15d | 2027-05-11 | 2027-06-01 | RHD4CZ5C051CCTV4200, RHD4CZ5C051CCTV3100, RHD4CZ5C051CCTV1500 |
|  | 4109 | **RHD4-02-002-Z5-RA07** |  | 2026-08-17 | 2027-07-06 |  |
|  | 4140 | **RHD4-02-002-Z5-RA07-Crossings Sewage Network - SWCr** |  |  |  |  |
|  | 4150 | **RHD4-02-002-RA07-(SWCr)-MH Works - 1200 mm diameter** |  |  |  |  |

| ID | WBS | Task | Duration | Start | Finish | Predecessors |
| --- | --- | --- | --- | --- | --- | --- |
|  | 4146 | **RHD4-02-002-RA07-(SWCr)-UPVC Pipes - 200 mm diameter** |  |  |  |  |
|  | 4184 | **RHD4-02-002-Z5-RA07-Crossings Potable Network - PTCr** |  |  |  |  |
|  | 4197 | **RHD4-02-002-RA07-(PTCr)-Fire Hydrant** |  |  |  |  |
|  | 4231 | **RHD4-02-002-Z5-RA07-Crossings Irrigation Network - IRRC** |  |  |  |  |
|  | 4234 | **RHD4-02-002-RA07-(IRRC)-HDPE Pipes - 200 mm diameter** |  |  |  |  |
|  | 4240 | **RHD4-02-002-RA07-(IRRC)-Gate Valves (Direct Buried)** |  |  |  |  |
|  | 4288 | **RHD4-02-002-Z5-RA07-Road Works - RD** |  | 2026-08-20 | 2027-07-06 |  |
|  | 4289 | **RHD4-02-002-RA07-(RD)-Subgrade** |  | 2026-08-20 | 2026-08-23 |  |
| RHD4CZ5RA07RD1100 |  | Supply, lay and compaction subgrade compacted thickness 300 mm for Roads - (ROUND-07)-Z5-RA07-RD | 3d | 2026-08-20 | 2026-08-23 | RHD4ENSDZ5APPRD220, RHD4ENSDZ5APPEW100, RHD4CZ5RA07SW3200 SS |
|  | 4290 | **RHD4-02-002-RA07-(RD)-Aggregate Base Course** |  | 2026-08-24 | 2026-08-27 |  |
| RHD4CZ5RA07RD2100 |  | Supply, lay and compaction Aggregate base course compacted thickness 300 mmfor Roads - (ROUND-07)-Z5-RA07-RD | 4d | 2026-08-24 | 2026-08-27 | RHD4PRSHLDOSRD1000, RHD4PRSHLSTAGRD1000, RHD4CZ5RA07RD1100 |
|  | 4291 | **RHD4-02-002-RA07-(RD)-Bituminous base course Two Layers, including (MC1)&(RC2)** |  | 2026-08-29 | 2027-04-17 |  |
| RHD4CZ5RA07RD3100 |  | Supply, lay and Asphaltic base course including Prime Coat (MC1) for 1st Layer - (ROUND-07)-Z5-RA07-RD | 2d | 2026-08-29 | 2026-08-30 | RHD4CZ5RA07RD2100, RHD4PRSHLDOSRD1100, RHD4ENMSASPH2000, RHD4ENMSASPH2010, RHD4PRSHLSTAGRD1100 |
| RHD4CZ5RA07RD3200 |  | Supply, lay and Asphaltic base course including Tack Coat (RC2) for 2nd Layer - (ROUND-07)-Z5-RA07-RD | 3d | 2027-04-14 | 2027-04-17 | RHD4PRSHLDOSRD1100, RHD4PRSHLSTAGRD1100, RHD4CZ5RA07CCTV6100, RHD4CZ5RA07CCTV1500 |
|  | 4293 | **RHD4-02-002-RA07-(RD)-Precast Concrete Curb** |  | 2027-04-18 | 2027-04-22 |  |
| RHD4CZ5RA07RD5100 |  | Supply and installation Precast Concrete Kerb for Roads - (ROUND-07)-Z5-RA07-RD | 5d | 2027-04-18 | 2027-04-22 | RHD4CZ5RA07RD3200, RHD4PRSHLDOSRD1200, RHD4ENMSRD2000, RHD4ENMSRD2010, RHD4PRSHLSTAGRD1200 |
|  | 4296 | **RHD4-02-002-RA07-(RD)-Traffic Signage** |  | 2027-04-24 | 2027-04-29 |  |
| RHD4CZ5RA07RD8100 |  | Installation of Traffic Signage for Road Network - (ROUND-07)-Z5-RA07-RD | 6d | 2027-04-24 | 2027-04-29 | RHD4CZ5RA07RD5100, RHD4PRSHLDOSRD1600, RHD4PRSHLSTAGRD1600 |
|  | 4294 | **RHD4-02-002-RA07-(RD)-Precast Interlocking Block Pavers** |  |  |  |  |
|  | 4292 | **RHD4-02-002-RA07-(RD)-Bituminous concrete wearing course including tack coat (RC2)** |  | 2027-04-24 | 2027-04-25 |  |
| RHD4CZ5RA07RD4100 |  | Supply, lay and compaction Asphaltic wearing course including tack Coat (RC2)for Road Network - (ROUND-07)-Z5-RA07-RD | 2d | 2027-04-24 | 2027-04-25 | RHD4CZ5RA07RD5100 |
|  | 4295 | **RHD4-02-002-RA07-(RD)-Pavement Marking** |  | 2027-05-01 | 2027-07-06 |  |
| RHD4CZ5RA07RD7100 |  | Pavement Markings for Road Network - (ROUND-07)-Z5-RA07-RD | 4d | 2027-05-01 | 2027-05-04 | RHD4CZ5RA07RD4100, RHD4PRSHLDOSRD1500, RHD4PRSHLSTAGRD1500, RHD4CZ5RA07RD8100 |
| RHD4CZ5RA07RD9200 |  | Installation for Wheel Stopper for Road Network - (ROUND-07)-Z5-RA07-RD | 5d | 2027-07-01 | 2027-07-06 | RHD4CZ5C051RD7100 |
|  | 4113 | **RHD4-02-002-Z5-RA07-Storm Network - ST** |  |  |  |  |
|  | 4130 | **RHD4-02-002-RA07-(ST)-MH Works - 1200 mm diameter** |  |  |  |  |
|  | 4132 | **RHD4-02-002-RA07-(ST)-MH Works - 2000 mm diameter** |  |  |  |  |
|  | 4131 | **RHD4-02-002-RA07-(ST)-MH Works - 1500 mm diameter** |  |  |  |  |
|  | 4120 | **RHD4-02-002-RA07-(ST)-GRP Pipes - 1000 mm diameter** |  |  |  |  |
|  | 4119 | **RHD4-02-002-RA07-(ST)-GRP Pipes - 900 mm diameter** |  |  |  |  |
|  | 4118 | **RHD4-02-002-RA07-(ST)-GRP Pipes - 800 mm diameter** |  |  |  |  |
|  | 4117 | **RHD4-02-002-RA07-(ST)-GRP Pipes - 700 mm diameter** |  |  |  |  |
|  | 4114 | **RHD4-02-002-RA07-(ST)-GRP Pipes - 400 mm diameter** |  |  |  |  |
|  | 4129 | **RHD4-02-002-RA07-(ST)-UPVC Pipes - 400 mm diameter** |  |  |  |  |
|  | 4128 | **RHD4-02-002-RA07-(ST)-UPVC Pipes - 300 mm diameter** |  |  |  |  |
|  | 4136 | **RHD4-02-002-RA07-(ST)-Concrete Encasement** |  |  |  |  |
|  | 4137 | **RHD4-02-002-Z5-RA07-Catch Basin - ST** |  |  |  |  |
|  | 4138 | **RHD4-02-002-RA07-(ST)-Single Catch Basin Works** |  |  |  |  |
|  | 4139 | **RHD4-02-002-RA07-(ST)-Double Catch Basin Works** |  |  |  |  |
|  | 4162 | **RHD4-02-002-Z5-RA07-Sewage Network - SW** |  | 2026-08-17 | 2026-09-03 |  |
|  | 4172 | **RHD4-02-002-RA07-(SW)-MH Works - 1200 mm diameter** |  | 2026-08-17 | 2026-09-03 |  |
| RHD4CZ5RA07SW3100 |  | Excavation and PC Blinding works for MH 1200 mm - (ROUND-07)-Z5-RA07-SW | 3d | 2026-08-17 | 2026-08-19 | RHD4ENSDZ5APPSW120, RHD4CZ5C061ST1500 SS, RHD4CZ5C051ST3101 |
| RHD4CZ5RA07SW3200 |  | Installation of Base for MH 1200 mm - (ROUND-07)-Z5-RA07-SW | 3d | 2026-08-20 | 2026-08-23 | RHD4CZ5RA07SW3100 |
| RHD4CZ5RA07SW3300 |  | MH Ring and C.Slab works and Backfilling works for MH 1200 mm - (ROUND-07)-Z5-RA07-SW | 3d | 2026-08-24 | 2026-08-26 | RHD4CZ5RA07SW3200 |
| RHD4CZ5RA07SW3400 |  | Steel Cover for MH 1200 mm - (ROUND-07)-Z5-RA07-SW | 2d | 2026-08-27 | 2026-08-29 | RHD4CZ5RA07SW3300 |
| RHD4CZ5RA07SW3500 |  | Finishing, Benching, Testing works for MH 1200 mm - (ROUND-07)-Z5-RA07-SW | 5d | 2026-08-30 | 2026-09-03 | RHD4CZ5RA07SW3400 |
|  | 4168 | **RHD4-02-002-RA07-(SW)-UPVC Pipes - 200 mm diameter** |  | 2026-08-24 | 2026-09-03 |  |
| RHD4CZ5RA07SW2100 |  | Excavation works for UPVC Pipe Line 200 mm - (ROUND-07)-Z5-RA07-SW | 2d | 2026-08-24 | 2026-08-25 | RHD4ENSDZ5APPSW120, RHD4CZ5RA07SW3200 |
| RHD4CZ5RA07SW2200 |  | Bedding works for UPVC Pipe Line 200 mm - (ROUND-07)-Z5-RA07-SW | 2d | 2026-08-26 | 2026-08-27 | RHD4CZ5RA07SW2100 |
| RHD4CZ5RA07SW2300 |  | Installing for UPVC Pipe Line 200 mm - (ROUND-07)-Z5-RA07-SW | 2d | 2026-08-29 | 2026-08-30 | RHD4CZ5RA07SW2200, RHD4CZ5RA07SW3300, RHD4PRSHLSTAGSW1004, RHD4PRSHLPOSW1000, RHD4PRSHLDOSSW1004, RHD4PRSHLDOSSW1304, RHD4PRSHLPOSW1100, RHD4PRSHLDOSSW1104 |
| RHD4CZ5RA07SW2400 |  | Primary Test for UPVC Pipe Line 200 mm - (ROUND-07)-Z5-RA07-SW | 2d | 2026-08-31 | 2026-09-01 | RHD4CZ5RA07SW2300 |
| RHD4CZ5RA07SW2500 |  | Backfilling and warning tape works for UPVC Pipe Line 200 mm - (ROUND-07)-Z5-RA07-SW | 2d | 2026-09-02 | 2026-09-03 | RHD4CZ5RA07SW2400, RHD4CZ5RA07RD3100 |
|  | 4199 | **RHD4-02-002-Z5-RA07-Potable Network - PT** |  | 2026-11-14 | 2026-12-08 |  |
|  | 4201 | **RHD4-02-002-RA07-(PT)-HDPE Pipes - 160 mm diameter** |  | 2026-11-14 | 2026-11-24 |  |
| RHD4CZ5RA07PT1101 |  | Excavation works for HDPE Pipline 160 mm - (ROUND-07)-Z5-RA07-PT | 2d | 2026-11-14 | 2026-11-15 | RHD4ENSDZ5APPPT130, RHD4ENMSPT2000, RHD4CZ5RA07SW3100, RHD4CZ5C051IRR3200 |
| RHD4CZ5RA07PT1201 |  | Bedding works for HDPE Pipline 160 mm - (ROUND-07)-Z5-RA07-PT | 2d | 2026-11-16 | 2026-11-17 | RHD4CZ5RA07PT1101 |
| RHD4CZ5RA07PT1301 |  | Installing for HDPE Pipline 160 mm - (ROUND-07)-Z5-RA07-PT | 2d | 2026-11-18 | 2026-11-19 | RHD4CZ5RA07PT1201, RHD4PRSHLDOSPT1000, RHD4PRSHLSTAGPT1000 |
| RHD4CZ5RA07PT1401 |  | Primary Test for HDPE Pipline 160 mm - (ROUND-07)-Z5-RA07-PT | 2d | 2026-11-21 | 2026-11-22 | RHD4CZ5RA07PT1301 |
| RHD4CZ5RA07PT1501 |  | Backfilling and warning tape works for HDPE Pipline 160 mm - (ROUND-07)-Z5-RA07-PT | 2d | 2026-11-23 | 2026-11-24 | RHD4CZ5RA07PT1401 |
|  | 1751 | **RHD4-02-002-RA07-(PT)-Air Valve Chambers** |  | 2026-11-28 | 2026-12-06 |  |
| RHD4CZ5RA07PT2102 |  | Excavation and Bedding for Air Valve Chambers for Potable Water Network - (ROUND-07)-Z5-RA07-PT | 2d | 2026-11-28 | 2026-11-29 | RHD4CZ5RA07PT2101 |
| RHD4CZ5RA07PT2202 |  | PC works for Air Valve Chambers for Potable Water Network - (ROUND-07)-Z5-RA07-PT | 2d | 2026-11-30 | 2026-12-01 | RHD4CZ5RA07PT2102 |
| RHD4CZ5RA07PT2302 |  | Installation for Air Valve Chambers for Potable Water Network - (ROUND-07)-Z5-RA07-PT | 2d | 2026-12-02 | 2026-12-03 | RHD4CZ5RA07PT2202 |
| RHD4CZ5RA07PT2402 |  | Backfilling works for Air Valve Chambers for Potable Water Network - (ROUND-07)-Z5-RA07-PT | 2d | 2026-12-05 | 2026-12-06 | RHD4CZ5RA07PT2302 |
|  | 2888 | **RHD4-02-002-RA071-(PT)-Fire Hydrant** |  | 2026-11-28 | 2026-12-08 |  |
| RHD4CZ5RA07PT4100 |  | Excavation and Bedding and Pipe Installation for Fire Hydrant - (ROUND-07)-Z5-RA07-PT | 2d | 2026-11-28 | 2026-11-29 | RHD4CZ5RA07PT2101 |
| RHD4CZ5RA07PT4200 |  | Valve Installation for Fire Hydrant - (ROUND-07)-Z5-RA07-PT | 2d | 2026-11-30 | 2026-12-01 | RHD4CZ5RA07PT4100 |
| RHD4CZ5RA07PT4300 |  | Stem for Fire Hydrant - (ROUND-07)-Z5-RA07-PT | 2d | 2026-12-02 | 2026-12-03 | RHD4CZ5RA07PT4200 |
| RHD4CZ5RA07PT4400 |  | Fire Installation for Fire Hydrant - (ROUND-07)-Z5-RA07-PT | 2d | 2026-12-05 | 2026-12-06 | RHD4CZ5RA07PT4300 |
| RHD4CZ5RA07PT4500 |  | Protection Barriers for Fire Hydrant - (ROUND-07)-Z5-RA07-PT | 2d | 2026-12-07 | 2026-12-08 | RHD4CZ5RA07PT4400 |

| ID | WBS | Task | Duration | Start | Finish | Predecessors |
| --- | --- | --- | --- | --- | --- | --- |
|  | 4208 | **RHD4-02-002-RA07-(PT)-Wash out Valve Chambers** |  | 2026-11-25 | 2026-12-06 |  |
| RHD4CZ5RA07PT2101 |  | Excavation and Bedding for Wash out Valve Chambers for Potable Water Network - (ROUND-07)-Z5-RA07-PT | 2d | 2026-11-25 | 2026-11-26 | RHD4CZ5RA07PT1501, RHD4ENSDZ5APPPT130 |
| RHD4CZ5RA07PT2201 |  | PC works for Wash out Valve Chambers for Potable Water Network - (ROUND-07)-Z5-RA07-PT | 2d | 2026-11-28 | 2026-11-29 | RHD4CZ5RA07PT2101 |
| RHD4CZ5RA07PT2301 |  | Installation for Wash out Valve Chambers for Potable Water Network - (ROUND-07)-Z5-RA07-PT | 2d | 2026-11-30 | 2026-12-01 | RHD4CZ5RA07PT2201, RHD4PRSHLDOSPT1100, RHD4PRSHLDOSPT1400, RHD4PRSHLSTAGPT1100, RHD4PRSHLSTAGPT1400 |
| RHD4CZ5RA07PT2401 |  | Backfilling works for Wash out Valve Chambers for Potable Water Network - (ROUND-07)-Z5-RA07-PT | 2d | 2026-12-05 | 2026-12-06 | RHD4CZ5RA07PT2301, RHD4CZ5RA07PT4300 |
|  | 4209 | **RHD4-02-002-RA07-(PT)-Wash out Valves** |  | 2026-12-02 | 2026-12-08 |  |
| RHD4CZ5RA07PT3102 |  | Installation for Wash out Valves for Potable Water Network - (ROUND-07)-Z5-RA07-PT | 2d | 2026-12-02 | 2026-12-03 | RHD4CZ5RA07PT2301, RHD4PRSHLDOSPT1200, RHD4PRSHLSTAGPT1200 |
| RHD4CZ5RA07PT3202 |  | Stem and Service box for Wash out Valves for Potable Water Network - (ROUND-07)-Z5-RA07-PT | 2d | 2026-12-07 | 2026-12-08 | RHD4CZ5RA07PT3102, RHD4CZ5RA07PT2401 |
|  | 1752 | **RHD4-02-002-RA07-(PT)-Air Valves** |  | 2026-12-05 | 2026-12-08 |  |
| RHD4CZ5RA07PT3103 |  | Installation for Air Valves for Potable Water Network - (ROUND-07)-Z5-RA07-PT | 2d | 2026-12-05 | 2026-12-06 | RHD4CZ5RA07PT2302 |
| RHD4CZ5RA07PT3203 |  | Stem and Service box for Air Valves for Potable Water Network - (ROUND-07)-Z5-RA07-PT | 2d | 2026-12-07 | 2026-12-08 | RHD4CZ5RA07PT3103, RHD4CZ5RA07PT2402 |
|  | 4205 | **RHD4-02-002-RA07-(PT)-Gate Valves (Direct Buried)** |  | 2026-11-18 | 2026-11-26 |  |
| RHD4CZ5RA07PT3100 |  | Installation for Direct Buried Gate Valves - (ROUND-07)-Z5-RA07-PT | 2d | 2026-11-18 | 2026-11-19 | RHD4CZ5RA07PT1301 FF, RHD4CZ5RA07PT1301 SS, RHD4PRSHLDOSPT1200, RHD4PRSHLSTAGPT1200 |
| RHD4CZ5RA07PT3200 |  | Stem and Service box for Direct Buried Gate Valves - (ROUND-07)-Z5-RA07-PT | 2d | 2026-11-25 | 2026-11-26 | RHD4CZ5RA07PT3100, RHD4CZ5RA07PT1501, RHD4PRSHLDOSPT1300 |
|  | 4214 | **RHD4-02-002-Z5-RA07-Irrigation Network - IRR** |  | 2026-11-16 | 2026-12-08 |  |
|  | 4217 | **RHD4-02-002-RA07-(IRR)-HDPE Pipes - 200 mm diameter** |  | 2026-11-16 | 2026-11-26 |  |
| RHD4CZ5RA07IRR1102 |  | Excavation works for HDPE Pipline 200 mm - (ROUND-07)-Z5-RA07-IRR | 2d | 2026-11-16 | 2026-11-17 | RHD4CZ5RA07PT1101, RHD4ENSDZ5APPIRR140, RHD4ENMSRR2000, RHD4CZ5C061IRR1102 |
| RHD4CZ5RA07IRR1202 |  | Bedding works for HDPE Pipline 200 mm - (ROUND-07)-Z5-RA07-IRR | 2d | 2026-11-18 | 2026-11-19 | RHD4CZ5RA07IRR1102 |
| RHD4CZ5RA07IRR1302 |  | Installing for HDPE Pipline 200 mm - (ROUND-07)-Z5-RA07-IRR | 2d | 2026-11-21 | 2026-11-22 | RHD4CZ5RA07IRR1202, RHD4PRSHLDOSIRR1000, RHD4PRSHLSTAGIRR1000 |
| RHD4CZ5RA07IRR1402 |  | Primary Test for HDPE Pipline 200 mm - (ROUND-07)-Z5-RA07-IRR | 2d | 2026-11-23 | 2026-11-24 | RHD4CZ5RA07IRR1302, RHD4CZ5RA07IRR3100 |
| RHD4CZ5RA07IRR1502 |  | Backfilling and warning tape works for HDPE Pipline 200 mm - (ROUND-07)-Z5-RA07-IRR | 2d | 2026-11-25 | 2026-11-26 | RHD4CZ5RA07IRR1402 |
|  | 4223 | **RHD4-02-002-RA07-(IRR)-Gate Valves (Direct Buried)** |  | 2026-11-21 | 2026-11-24 |  |
| RHD4CZ5RA07IRR3100 |  | Installation for Direct Buried Gate Valves - (ROUND-07)-Z5-RA07-IRR | 2d | 2026-11-21 | 2026-11-22 | RHD4CZ5RA07IRR1302 SS, RHD4CZ5RA07IRR1302 FF, RHD4PRSHLDOSIRR1100, RHD4PRSHLSTAGIRR1100 |
| RHD4CZ5RA07IRR3200 |  | Stem and Service box for Direct Buried Gate Valves - (ROUND-07)-Z5-RA07-IRR | 2d | 2026-11-23 | 2026-11-24 | RHD4CZ5RA07IRR3100 |
|  | 4226 | **RHD4-02-002-RA07-(IRR)-Wash out Chamber** |  | 2026-11-28 | 2026-12-06 |  |
| RHD4CZ5RA07IRR2101 |  | Excavation and Bedding for Wash out Chamber for Irrigation Network - (ROUND-07)-Z5-RA07-IRR | 2d | 2026-11-28 | 2026-11-29 | RHD4CZ5RA07IRR1502, RHD4ENSDZ5APPIRR140, RHD4CZ5RA07IRR3200 |
| RHD4CZ5RA07IRR2201 |  | PC works for Wash out Chamber for Irrigation Network - (ROUND-07)-Z5-RA07-IRR | 2d | 2026-11-30 | 2026-12-01 | RHD4CZ5RA07IRR2101 |
| RHD4CZ5RA07IRR2301 |  | Installation for Wash out Chamber for Irrigation Network - (ROUND-07)-Z5-RA07-IRR | 2d | 2026-12-02 | 2026-12-03 | RHD4CZ5RA07IRR2201, RHD4PRSHLDOSIRR1200, RHD4PRSHLDOSIRR1400, RHD4PRSHLSTAGIRR1200, RHD4PRSHLSTAGIRR1400 |
| RHD4CZ5RA07IRR2401 |  | Backfilling works for Wash out Chamber for Irrigation Network - (ROUND-07)-Z5-RA07-IRR | 2d | 2026-12-05 | 2026-12-06 | RHD4CZ5RA07IRR2301 |
|  | 4227 | **RHD4-02-002-RA07-(IRR)-Wash out Valves** |  | 2026-12-05 | 2026-12-08 |  |
| RHD4CZ5RA07IRR3102 |  | Installation for Wash out Valve for Irrigation Network - (ROUND-07)-Z5-RA07-IRR | 2d | 2026-12-05 | 2026-12-06 | RHD4CZ5RA07IRR2301, RHD4PRSHLDOSIRR1100, RHD4PRSHLSTAGIRR1100 |
| RHD4CZ5RA07IRR3202 |  | Stem and Service box for Wash out Valve for Irrigation Network - (ROUND-07)-Z5-RA07-IRR | 2d | 2026-12-07 | 2026-12-08 | RHD4CZ5RA07IRR3102, RHD4CZ5RA07IRR2401, RHD4PRSHLDOSIRR1300, RHD4PRSHLSTAGIRR1300 |
|  | 6107 | **RHD4-02-002-RA07-(IRR)-HDPE Pipes - 160 mm diameter** |  | 2026-11-18 | 2026-12-01 |  |
| RHD4CZ5RA07IRR1100 |  | Excavation works for HDPE Pipline 160 mm - (ROUND-07)-Z5-RA07-IRR | 2d | 2026-11-18 | 2026-11-19 | RHD4CZ5RA07IRR1102 |
| RHD4CZ5RA07IRR1200 |  | Bedding works for HDPE Pipline 160 mm - (ROUND-07)-Z5-RA07-IRR | 2d | 2026-11-21 | 2026-11-22 | RHD4CZ5RA07IRR1100 |
| RHD4CZ5RA07IRR1300 |  | Installing for HDPE Pipline 160 mm - (ROUND-07)-Z5-RA07-IRR | 2d | 2026-11-23 | 2026-11-24 | RHD4CZ5RA07IRR1200 |
| RHD4CZ5RA07IRR1400 |  | Primary Test for HDPE Pipline 160 mm - (ROUND-07)-Z5-RA07-IRR | 2d | 2026-11-28 | 2026-11-29 | RHD4CZ5RA07IRR5100, RHD4CZ5RA07IRR1300 |
| RHD4CZ5RA07IRR1500 |  | Backfilling and warning tape works for HDPE Pipline 160 mm - (ROUND-07)-Z5-RA07-IRR | 2d | 2026-11-30 | 2026-12-01 | RHD4CZ5RA07IRR1400 |
|  | 1771 | **RHD4-02-002-RA07-(IRR)-Concrete Encasement** |  | 2026-11-25 | 2026-11-26 |  |
| RHD4CZ5RA07IRR5100 |  | Pipe Encasement for Irrigation Pipelines - (ROUND-07)-Z5-RA07-IRR | 2d | 2026-11-25 | 2026-11-26 | RHD4CZ5RA07IRR1300 |
|  | 4248 | **RHD4-02-002-Z5-RA07-Medium Voltage Network - MV** |  | 2027-01-03 | 2027-01-26 |  |
|  | 4249 | **RHD4-02-002-RA07-(MV)-Medium Voltage cable trench** |  | 2027-01-03 | 2027-01-11 |  |
| RHD4CZ5RA07MV1100 |  | Excavation for Medium Voltage Trench - (ROUND-07)-Z5-RA07-MV | 3d | 2027-01-03 | 2027-01-05 | RHD4ENSDZ5APPMV150, RHD4CZ5RA07RD3100, RHD4CZ5C051MV3300 |
| RHD4CZ5RA07MV1200 |  | Trench Backfilling for Medium Voltage Network - (ROUND-07)-Z5-RA07-MV | 3d | 2027-01-09 | 2027-01-11 | RHD4CZ5RA07MV3101 |
|  | 4251 | **RHD4-02-002-RA07-(MV)-Medium Voltage cables 3Cx 500 mm²** |  | 2027-01-06 | 2027-01-17 |  |
| RHD4CZ5RA07MV3100 |  | Installation of Medium Voltage Cables 3Cx 500 mm² - (ROUND-07)-Z5-RA07-MV | 4d | 2027-01-06 | 2027-01-10 | RHD4CZ5RA07MV1100, RHD4PRSHLDOSMV1100, RHD4ENMSMV2000, RHD4ENMSMV2010, RHD4PRSHLSTAGMV1100 |
| RHD4CZ5RA07MV3200 |  | Joints Installation of Medium Voltage Cables 3Cx 500 mm² - (ROUND-07)-Z5-RA07-MV | 2d | 2027-01-11 | 2027-01-12 | RHD4CZ5RA07MV3100, RHD4PRSHLDOSMV1300, RHD4PRSHLSTAGMV1300 |
| RHD4CZ5RA07MV3300 |  | Testing of Medium Voltage Cables 3Cx 500 mm² - (ROUND-07)-Z5-RA07-MV | 2d | 2027-01-13 | 2027-01-14 | RHD4CZ5RA07MV3200, RHD4CZ5RA07MV1200 |
| RHD4CZ5RA07MV3400 |  | Termination of Medium Voltage Cables 3Cx 500 mm² - (ROUND-07)-Z5-RA07-MV | 2d | 2027-01-16 | 2027-01-17 | RHD4CZ5RA07MV3300 |
|  | 4252 | **RHD4-02-002-RA07-(MV)-Medium Voltage cables 3Cx 50 mm²** |  | 2027-01-06 | 2027-01-16 |  |
| RHD4CZ5RA07MV3101 |  | Installation of Medium Voltage Cables 3Cx 50 mm² - (ROUND-07)-Z5-RA07-MV | 2d | 2027-01-06 | 2027-01-07 | RHD4CZ5RA07MV1100, RHD4PRSHLDOSMV1200, RHD4ENMSMV2000, RHD4ENMSMV2010, RHD4PRSHLSTAGMV1200 |
| RHD4CZ5RA07MV3301 |  | Testing of Medium Voltage Cables 3Cx 50 mm² - (ROUND-07)-Z5-RA07-MV | 2d | 2027-01-12 | 2027-01-13 | RHD4CZ5RA07MV3101, RHD4CZ5RA07MV1200 |
| RHD4CZ5RA07MV3401 |  | Termination of Medium Voltage Cables 3Cx 50 mm² - (ROUND-07)-Z5-RA07-MV | 2d | 2027-01-14 | 2027-01-16 | RHD4CZ5RA07MV3301 |
|  | 4254 | **RHD4-02-002-RA07-(MV)-Unit Substations** |  | 2027-01-12 | 2027-01-26 |  |
| RHD4CZ5RA07MV5100 |  | Excavation for Unit Substations for Medium Voltage Network - (ROUND-07)-Z5-RA07-MV | 2d | 2027-01-12 | 2027-01-13 | RHD4CZ5RA07MV1200, RHD4ENSDZ5APPMV150 |
| RHD4CZ5RA07MV5200 |  | Concrete Base Placement for Unit Substations for Medium Voltage Network - (ROUND-07)-Z5-RA07-MV | 2d | 2027-01-14 | 2027-01-16 | RHD4CZ5RA07MV5100 |
| RHD4CZ5RA07MV5300 |  | Installation for Fences and doors for Medium Voltage Network - (ROUND-07)-Z5-RA07-MV | 5d | 2027-01-17 | 2027-01-21 | RHD4CZ5RA07MV5200 |
| RHD4CZ5RA07MV5400 |  | Installation for Unit Substations for Medium Voltage Network - (ROUND-07)-Z5-RA07-MV | 4d | 2027-01-23 | 2027-01-26 | RHD4CZ5RA07MV5300 |
|  | 4255 | **RHD4-02-002-Z5-RA07-Low Voltage Network - LV** |  | 2026-12-02 | 2026-12-30 |  |
|  | 4256 | **RHD4-02-002-RA07-(LV)-Low Voltage duct banks** |  | 2026-12-02 | 2026-12-12 |  |
| RHD4CZ5RA07LV2100 |  | Excavation of Duct Banks for Low Voltage Network - (ROUND-07)-Z5-RA07-LV | 2d | 2026-12-02 | 2026-12-03 | RHD4CZ5RA07RA3000, RHD4ENSDZ5APPLV160, RHD4CZ5RA07IRR1500 |
| RHD4CZ5RA07LV2200 |  | Installation of Duct Banks for Low Voltage Network - (ROUND-07)-Z5-RA07-LV | 3d | 2026-12-05 | 2026-12-07 | RHD4CZ5RA07LV2100 |
| RHD4CZ5RA07LV2300 |  | Pouring of Duct Banks for Low Voltage Network - (ROUND-07)-Z5-RA07-LV | 2d | 2026-12-08 | 2026-12-09 | RHD4CZ5RA07LV2200 |
| RHD4CZ5RA07LV2400 |  | Backfilling of Duct Banks for Low Voltage Network - (ROUND-07)-Z5-RA07-LV | 2d | 2026-12-10 | 2026-12-12 | RHD4CZ5RA07LV2300 |
|  | 4257 | **RHD4-02-002-RA07-(LV)-Low Voltage Drawpit** |  | 2026-12-10 | 2026-12-14 |  |
| RHD4CZ5RA07LV5100 |  | Excavation of Drawpit size 900x900x1000mm for Low Voltage Network - (ROUND-07)-Z5-RA07-LV | 2d | 2026-12-10 | 2026-12-12 | RHD4CZ5RA07LV2300, RHD4ENSDZ5APPLV160 |
| RHD4CZ5RA07LV5200 |  | Installation of Drawpit size 900x900x1000mm for Low Voltage Network - (ROUND-07)-Z5-RA07-LV | 2d | 2026-12-13 | 2026-12-14 | RHD4CZ5RA07LV5100, RHD4PRSHLDOSLV1400, RHD4PRSHLSTAGLV1400 |
|  | 4258 | **RHD4-02-002-RA07-(LV)-Low Voltage cables** |  | 2026-12-15 | 2026-12-23 |  |
| RHD4CZ5RA07LV3100 |  | Excavation for Low Voltage Cables for Low Voltage Network - (ROUND-07)-Z5-RA07-LV | 2d | 2026-12-15 | 2026-12-16 | RHD4CZ5RA07LV2400, RHD4CZ5RA07PT1501, RHD4ENSDZ5APPLV160, RHD4CZ5RA07LV5200 |
| RHD4CZ5RA07LV3200 |  | Cable Laying of Low Voltage Cables for Low Voltage Network - (ROUND-07)-Z5-RA07-LV | 2d | 2026-12-17 | 2026-12-19 | RHD4CZ5RA07LV3100, RHD4PRSHLDOSLV1100, RHD4ENMSLV2000, RHD4ENMSLV2010, RHD4PRSHLSTAGLV1100 |

| ID | WBS | Task | Duration | Start | Finish | Predecessors |
| --- | --- | --- | --- | --- | --- | --- |
| RHD4CZ5RA07LV3300 |  | Warning tape and Backfill for Low Voltage Cables for Low Voltage Network - (ROUND-07)-Z5-RA07-LV | 2d | 2026-12-20 | 2026-12-21 | RHD4CZ5RA07LV3200 |
| RHD4CZ5RA07LV3400 |  | Testing of Low Voltage Cables for Low Voltage Network - (ROUND-07)-Z5-RA07-LV | 2d | 2026-12-22 | 2026-12-23 | RHD4CZ5RA07LV3300 |
|  | 4259 | **RHD4-02-002-RA07-(LV)-Low Voltage Distribution Pillars** |  | 2026-12-24 | 2026-12-30 |  |
| RHD4CZ5RA07LV4100 |  | Leveling for Distribution Pillars for Low Voltage Network - (ROUND-07)-Z5-RA07-LV | 2d | 2026-12-24 | 2026-12-26 | RHD4CZ5RA07LV3300, RHD4CZ5RA07LV3400 |
| RHD4CZ5RA07LV4200 |  | Lean Concrete for Distribution Pillars for Low Voltage Network - (ROUND-07)-Z5-RA07-LV | 2d | 2026-12-27 | 2026-12-28 | RHD4CZ5RA07LV4100 |
| RHD4CZ5RA07LV4300 |  | Installation of Distribution Pillars for Low Voltage Network - (ROUND-07)-Z5-RA07-LV | 2d | 2026-12-29 | 2026-12-30 | RHD4CZ5RA07LV4200, RHD4PRSHLDOSLV1200, RHD4PRSHLDOSLV1300, RHD4PRSHLSTAGLV1200, RHD4PRSHLSTAGLV1300 |
|  | 4260 | **RHD4-02-002-RA07-(LV)-Low Voltage Distribution Pillars Earthing** |  |  |  |  |
|  | 4261 | **RHD4-02-002-Z5-RA07-Street Lighting Network - SL** |  | 2026-12-05 | 2027-01-28 |  |
|  | 4262 | **RHD4-02-002-RA07-(SL)-Street Lighting duct banks** |  | 2026-12-05 | 2026-12-22 |  |
| RHD4CZ5RA07SL2100 |  | Excavation of Duct Banks for Street Lighting Network - (ROUND-07)-Z5-RA07-SL | 4d | 2026-12-05 | 2026-12-08 | RHD4CZ5RA07LV2100, RHD4CZ5RA07RA3000, RHD4ENSDZ5APPSL170 |
| RHD4CZ5RA07SL2200 |  | Installation of Duct Banks for Street Lighting Network - (ROUND-07)-Z5-RA07-SL | 5d | 2026-12-09 | 2026-12-14 | RHD4CZ5RA07SL2100, RHD4CZ5RA07LV2200, RHD4PRSHLDOSSL1000, RHD4PRSHLSTAGSL1000 |
| RHD4CZ5RA07SL2300 |  | Pouring of Duct Banks for Street Lighting Network - (ROUND-07)-Z5-RA07-SL | 4d | 2026-12-15 | 2026-12-19 | RHD4CZ5RA07SL2200, RHD4CZ5RA07LV2300 |
| RHD4CZ5RA07SL2400 |  | Backfilling of Duct Banks for Street Lighting Network - (ROUND-07)-Z5-RA07-SL | 3d | 2026-12-20 | 2026-12-22 | RHD4CZ5RA07SL2300, RHD4CZ5RA07LV2400 |
|  | 4263 | **RHD4-02-002-RA07-(SL)-Street Lighting Drawpit** |  | 2026-12-31 | 2027-01-04 |  |
| RHD4CZ5RA07SL5100 |  | Excavation of Drawpit size 600x600x900mm for Street Lighting Network - (ROUND-07)-Z5-RA07-SL | 2d | 2026-12-31 | 2027-01-02 | RHD4CZ5RA07SL2300, RHD4ENSDZ5APPSL170, RHD4CZ5RA07LV4300 |
| RHD4CZ5RA07SL5200 |  | Installation of Drawpit size 600x600x900mm for Street Lighting Network - (ROUND-07)-Z5-RA07-SL | 2d | 2027-01-03 | 2027-01-04 | RHD4CZ5RA07SL5100, RHD4PRSHLDOSSL1400, RHD4PRSHLSTAGSL1400 |
|  | 4264 | **RHD4-02-002-RA07-(SL)-Street Lighting cables** |  | 2027-01-05 | 2027-01-14 |  |
| RHD4CZ5RA07SL3100 |  | Excavation for Street Lighting Cables for Street Lighting Network - (ROUND-07)-Z5-RA07-SL | 3d | 2027-01-05 | 2027-01-07 | RHD4ENSDZ5APPSL170, RHD4CZ5RA07SL5200 |
| RHD4CZ5RA07SL3200 |  | Cable Laying of Street Lighting Cables for Street Lighting Network - (ROUND-07)-Z5-RA07-SL | 2d | 2027-01-09 | 2027-01-10 | RHD4CZ5RA07SL3100, RHD4PRSHLDOSSL1100, RHD4ENMSSL2000, RHD4ENMSSL2010, RHD4PRSHLSTAGSL1100 |
| RHD4CZ5RA07SL3300 |  | Warning tape and Backfill for Street Lighting Cables for Street Lighting Network - (ROUND-07)-Z5-RA07-SL | 2d | 2027-01-11 | 2027-01-12 | RHD4CZ5RA07SL3200 |
| RHD4CZ5RA07SL3400 |  | Testing of Street Lighting Cables for Street Lighting Network - (ROUND-07)-Z5-RA07-SL | 2d | 2027-01-13 | 2027-01-14 | RHD4CZ5RA07SL3300 |
|  | 4265 | **RHD4-02-002-RA07-(SL)-Street Lighting Poles** |  | 2027-01-16 | 2027-01-26 |  |
| RHD4CZ5RA07SL1100 |  | Excavation for RC Base for Lighting Poles for Street Lighting Network - (ROUND-07)-Z5-RA07-SL | 2d | 2027-01-16 | 2027-01-17 | RHD4CZ5RA07SL2400, RHD4ENSDZ5APPSL170, RHD4CZ5RA07SL3400 |
| RHD4CZ5RA07SL1200 |  | Installation for RC Base for Lighting Poles for Street Lighting Network - (ROUND-07)-Z5-RA07-SL | 2d | 2027-01-18 | 2027-01-19 | RHD4CZ5RA07SL1100 |
| RHD4CZ5RA07SL1300 |  | Backfill for RC Base for Lighting Poles for Street Lighting Network - (ROUND-07)-Z5-RA07-SL | 2d | 2027-01-20 | 2027-01-21 | RHD4CZ5RA07SL1200 |
| RHD4CZ5RA07SL1400 |  | Installation for Lighting Poles for Street Lighting Network - (ROUND-07)-Z5-RA07-SL | 2d | 2027-01-23 | 2027-01-24 | RHD4CZ5RA07SL1300, RHD4PRSHLDOSSL1200, RHD4ENMSSL2000, RHD4ENMSSL2010, RHD4PRSHLSTAGSL1200 |
| RHD4CZ5RA07SL1500 |  | Luminaire Installation for Lighting Poles for Street Lighting Network - (ROUND-07)-Z5-RA07-SL | 2d | 2027-01-25 | 2027-01-26 | RHD4CZ5RA07SL1400, RHD4PRSHLDOSSL1300, RHD4PRSHLSTAGSL1300 |
|  | 4266 | **RHD4-02-002-RA07-(SL)-Street Lighting Feeder Pillars** |  | 2027-01-13 | 2027-01-26 |  |
| RHD4CZ5RA07SL4100 |  | Leveling for Distribution Pillars for Street Lighting Network - (ROUND-07)-Z5-RA07-SL | 2d | 2027-01-13 | 2027-01-14 | RHD4CZ5RA07SL3300 |
| RHD4CZ5RA07SL4200 |  | Lean Concrete for Distribution Pillars for Street Lighting Network - (ROUND-07)-Z5-RA07-SL | 2d | 2027-01-16 | 2027-01-17 | RHD4CZ5RA07SL4100 |
| RHD4CZ5RA07SL4300 |  | Installation of Distribution Pillars for Street Lighting Network - (ROUND-07)-Z5-RA07-SL | 2d | 2027-01-25 | 2027-01-26 | RHD4CZ5RA07SL4200, RHD4CZ5RA07SL1400 |
|  | 4267 | **RHD4-02-002-RA07-(SL)-Street Lighting Earthing System** |  | 2027-01-27 | 2027-01-28 |  |
| RHD4CZ5RA07SL6100 |  | Installation of Earthing for Lighting Poles and Fedder Pillers for Street Lighting Network - (ROUND-07)-Z5-RA07-SL | 2d | 2027-01-27 | 2027-01-28 | RHD4CZ5RA07SL4300, RHD4ENMSER2000, RHD4ENMSER2010, RHD4CZ5RA07SL1500 |
|  | 4273 | **RHD4-02-002-Z5-RA07-Telecommunications Network - TC** |  | 2027-01-30 | 2027-02-14 |  |
|  | 4274 | **RHD4-02-002-RA07-(TC)-Telecommunications Ducts** |  | 2027-01-30 | 2027-02-09 |  |
| RHD4CZ5RA07TC2100 |  | Excavation of HDPE Ducts for Telecom Network - (ROUND-07)-Z5-RA07-TC | 3d | 2027-01-30 | 2027-02-01 | RHD4ENSDZ5APPTC190, RHD4CZ5RA07SL6100 |
| RHD4CZ5RA07TC2200 |  | Installation of HDPE Ducts for Telecom Network - (ROUND-07)-Z5-RA07-TC | 4d | 2027-02-02 | 2027-02-06 | RHD4CZ5RA07TC2100, RHD4PRSHLDOSTC1000, RHD4PRSHLSTAGTC1000 |
| RHD4CZ5RA07TC2400 |  | Backfilling of HDPE Ducts for Telecom Network - (ROUND-07)-Z5-RA07-TC | 3d | 2027-02-07 | 2027-02-09 | RHD4CZ5RA07TC2200 |
|  | 4275 | **RHD4-02-002-RA07-(TC)-Telecommunications Manholes** |  | 2027-02-10 | 2027-02-14 |  |
| RHD4CZ5RA07TC5100 |  | Excavation for Manholes for Telecom Network - (ROUND-07)-Z5-RA07-TC | 2d | 2027-02-10 | 2027-02-11 | RHD4ENSDZ5APPTC190, RHD4CZ5RA07TC2400, RHD4CZ5RA07MV5400, RHD4CZ5RA07MV3400, RHD4CZ5RA07MV3401 |
| RHD4CZ5RA07TC5200 |  | Installation of Manholes for Telecom Network - (ROUND-07)-Z5-RA07-TC | 2d | 2027-02-13 | 2027-02-14 | RHD4CZ5RA07TC5100, RHD4PRSHLDOSTC1200, RHD4PRSHLSTAGTC1200 |
|  | 5411 | **RHD4-02-002-RA07-(TC)-Telecomminications Road Crossings** |  |  |  |  |
|  | 4277 | **RHD4-02-002-Z5-RA07-Information and Communication Technologies - ICT** |  | 2027-02-15 | 2027-03-03 |  |
|  | 4278 | **RHD4-02-002-RA07-(ICT)-Information and Communication Technologies Ducts** |  | 2027-02-15 | 2027-02-27 |  |
| RHD4CZ5RA07ICT2100 |  | Excavation of HDPE Ducts for ICT Network - (ROUND-07)-Z5-RA07-ICT | 3d | 2027-02-15 | 2027-02-17 | RHD4ENSDZ5APPICT200, RHD4CZ5RA07SL2100, RHD4CZ5RA07TC5200 |
| RHD4CZ5RA07ICT2200 |  | Installation of HDPE Ducts for ICT Network - (ROUND-07)-Z5-RA07-ICT | 4d | 2027-02-18 | 2027-02-23 | RHD4CZ5RA07ICT2100, RHD4PRSHLDOSICT1000, RHD4PRSHLSTAGICT1000 SS |
| RHD4CZ5RA07ICT2400 |  | Backfilling of HDPE Ducts for ICT Network - (ROUND-07)-Z5-RA07-ICT | 3d | 2027-02-24 | 2027-02-27 | RHD4CZ5RA07ICT2200 |
|  | 4279 | **RHD4-02-002-RA07-(ICT)-Information and Communication Technologies Manholes** |  | 2027-02-28 | 2027-03-03 |  |
| RHD4CZ5RA07ICT5100 |  | Excavation for Manholes for ICT Network - (ROUND-07)-Z5-RA07-ICT | 2d | 2027-02-28 | 2027-03-01 | RHD4ENSDZ5APPICT200, RHD4CZ5RA07ICT2400 |
| RHD4CZ5RA07ICT5200 |  | Installation of Manholes for ICT Network - (ROUND-07)-Z5-RA07-ICT | 2d | 2027-03-02 | 2027-03-03 | RHD4PRSHLDOSICT1200, RHD4PRSHLSTAGICT1200, RHD4CZ5RA07ICT5100 |
|  | 4268 | **RHD4-02-002-Z5-RA07-Landscape Network - LS** |  |  |  |  |
|  | 4269 | **RHD4-02-002-RA07-(LS)-Landscape Lighting cables** |  |  |  |  |
|  | 4270 | **RHD4-02-002-RA07-(LS)-Landscape Feeder Pillars** |  |  |  |  |
|  | 4271 | **RHD4-02-002-RA07-(LS)-Landscape Bollard Poles** |  |  |  |  |
|  | 4272 | **RHD4-02-002-RA07-(LS)-Landscape Feeder Pillars Earthing** |  |  |  |  |
|  | 4281 | **RHD4-02-002-Z5-RA07-Security Network - CCTV** |  | 2027-03-04 | 2027-04-13 |  |
|  | 4282 | **RHD4-02-002-RA07-(CCTV)-Civil Works** |  | 2027-03-04 | 2027-03-18 |  |
| RHD4CZ5RA07CCTV2100 |  | Civil Works for Security Network - (ROUND-07)-Z5-RA07-CCTV | 10d | 2027-03-04 | 2027-03-18 | RHD4CZ5RA07ICT5200 |
|  | 4283 | **RHD4-02-002-RA07-(CCTV)-CCTV Poles** |  | 2027-03-20 | 2027-03-30 |  |
| RHD4CZ5RA07CCTV1100 |  | Excavation for RC Base for CCTV Poles for Security Network - (ROUND-07)-Z5-RA07-CCTV | 2d | 2027-03-20 | 2027-03-21 | RHD4CZ5RA07CCTV2100, RHD4ENSDZ5APPCCTV210 |
| RHD4CZ5RA07CCTV1200 |  | Installation for RC Base for CCTV Poles for Security Network - (ROUND-07)-Z5-RA07-CCTV | 2d | 2027-03-22 | 2027-03-23 | RHD4CZ5RA07CCTV1100 |
| RHD4CZ5RA07CCTV1300 |  | Backfill for RC Base for CCTV Poles for Security Network - (ROUND-07)-Z5-RA07-CCTV | 2d | 2027-03-24 | 2027-03-25 | RHD4CZ5RA07CCTV1200 |
| RHD4CZ5RA07CCTV1400 |  | Installation for CCTV Poles for Security Network - (ROUND-07)-Z5-RA07-CCTV | 2d | 2027-03-27 | 2027-03-28 | RHD4CZ5RA07CCTV1300, RHD4PRSHLDOSCCTV1000, RHD4PRSHLSTACCTV1000 |
| RHD4CZ5RA07CCTV1500 |  | Protection post Installation for CCTV Poles for Security Network - (ROUND-07)-Z5-RA07-CCTV | 2d | 2027-03-29 | 2027-03-30 | RHD4CZ5RA07CCTV1400 |
|  | 4284 | **RHD4-02-002-RA07-(CCTV)-Camera** |  | 2027-03-31 | 2027-04-01 |  |
| RHD4CZ5RA07CCTV3100 |  | Installation for Cameras for Security Network - (ROUND-07)-Z5-RA07-CCTV | 2d | 2027-03-31 | 2027-04-01 | RHD4CZ5RA07CCTV1400, RHD4CZ5RA07CCTV4100, RHD4PRSHLDOSCCTV1100, RHD4PRSHLSTACCTV1100 |
|  | 4285 | **RHD4-02-002-RA07-(CCTV)-Power and Infrastructure** |  | 2027-03-29 | 2027-04-01 |  |
| RHD4CZ5RA07CCTV4100 |  | Installation of Power outlet, UPS and midspan for PTZ Camerafor Cameras for Security Network - (ROUND-07)-Z5-RA07-CCTV | 2d | 2027-03-29 | 2027-03-30 | RHD4CZ5RA07CCTV1400, RHD4PRSHLDOSCCTV1300, RHD4PRSHLSTACCTV1300 |
| RHD4CZ5RA07CCTV4200 |  | Short Range Wireless PoP wireless Bridgefor CCTV Poles for Security Network - (ROUND-07)-Z5-RA07-CCTV | 2d | 2027-03-31 | 2027-04-01 | RHD4CZ5RA07CCTV4100 |
|  | 4287 | **RHD4-02-002-RA07-(CCTV)-CCTV Panels and Components** |  | 2027-04-03 | 2027-04-13 |  |

| ID | WBS | Task | Duration | Start | Finish | Predecessors |
| --- | --- | --- | --- | --- | --- | --- |
| RHD4CZ5RA07CCTV6100 |  | Installation for CCTV Panels for Security Network - (ROUND-07)-Z5-RA07-CCTV | 10d | 2027-04-03 | 2027-04-13 | RHD4CZ5RA07CCTV4200, RHD4CZ5RA07CCTV3100, RHD4PRSHLDOSCCTV1200, RHD4PRSHLSTACCTV1200, RHD4PRLOLSTACCTV1001 |
|  | 4487 | **RHD4-02-002-Z5-C061** |  | 2026-07-12 | 2027-04-18 |  |
|  | 4518 | **RHD4-02-002-Z5-C061-Crossings Sewage Network - SWCr** |  |  |  |  |
|  | 4528 | **RHD4-02-002-C061-(SWCr)-MH Works - 1200 mm diameter** |  |  |  |  |
|  | 4529 | **RHD4-02-002-C061-(SWCr)-MH Works - 1200 mm diameter with Back drop** |  |  |  |  |
|  | 4520 | **RHD4-02-002-C061-(SWCr)-GRP Pipes - 400 mm diameter** |  |  |  |  |
|  | 4524 | **RHD4-02-002-C061-(SWCr)-UPVC Pipes - 200 mm diameter** |  |  |  |  |
|  | 4532 | **RHD4-02-002-C061-(SWCr)-Wash out Chambers** |  |  |  |  |
|  | 4533 | **RHD4-02-002-C061-(SWCr)-Wash out Valves** |  |  |  |  |
|  | 4539 | **RHD4-02-002-C061-(SWCr)-Gate Valves (Direct Buried)** |  |  |  |  |
|  | 4562 | **RHD4-02-002-Z5-C061-Crossings Potable Network - PTCr** |  |  |  |  |
|  | 4564 | **RHD4-02-002-C061-(PTCr)-HDPE Pipes - 160 mm diameter** |  |  |  |  |
|  | 4575 | **RHD4-02-002-C061-(PTCr)-Fire Hydrant** |  |  |  |  |
|  | 4666 | **RHD4-02-002-Z5-C061-Road Works - RD** |  | 2026-08-24 | 2027-04-18 |  |
|  | 4667 | **RHD4-02-002-C061-(RD)-Subgrade** |  | 2026-08-24 | 2026-08-31 |  |
| RHD4CZ5C061RD1100 |  | Supply, lay and compaction subgrade compacted thickness 300 mm for Roads - (RD-C-6 /1)-Z5-C061-RD | 7d | 2026-08-24 | 2026-08-31 | RHD4ENSDZ5APPRD220, RHD4ENSDZ5APPEW100 SS, RHD4CZ5C061ST3301, RHD4CZ5C061ST3300, RHD4CZ5C061ST1503, RHD4CZ5C061TC3400, RHD4CZ5C061ICT3400 |
|  | 4668 | **RHD4-02-002-C061-(RD)-Aggregate Base Course** |  | 2026-09-01 | 2026-09-05 |  |
| RHD4CZ5C061RD2100 |  | Supply, lay and compaction Aggregate base course compacted thickness 300 mmfor Roads - (RD-C-6 /1)-Z5-C061-RD | 4d | 2026-09-01 | 2026-09-05 | RHD4CZ5C061RD1100 |
|  | 4669 | **RHD4-02-002-C061-(RD)-Bituminous base course Two Layers, including (MC1)&(RC2)** |  | 2026-09-06 | 2027-04-05 |  |
| RHD4CZ5C061RD3100 |  | Supply, lay and Asphaltic base course including Prime Coat (MC1) for 1st Layer - (RD-C-6 /1)-Z5-C061-RD | 2d | 2026-09-06 | 2026-09-07 | RHD4CZ5C061RD2100, RHD4ENMSASPH2000, RHD4ENMSASPH2010 |
| RHD4CZ5C061RD3200 |  | Supply, lay and Asphaltic base course including Tack Coat (RC2) for 2nd Layer - (RD-C-6 /1)-Z5-C061-RD | 2d | 2027-04-04 | 2027-04-05 | RHD4PRSHLDOSRD1100, RHD4PRSHLSTAGRD1100, RHD4CZ5C061CCTV6100 |
|  | 4671 | **RHD4-02-002-C061-(RD)-Precast Concrete Curb** |  | 2027-04-06 | 2027-04-11 |  |
| RHD4CZ5C061RD5100 |  | Supply and installation Precast Concrete Kerb for Roads - (RD-C-6 /1)-Z5-C061-RD | 5d | 2027-04-06 | 2027-04-11 | RHD4CZ5C061RD3200, RHD4ENMSRD2000 |
|  | 4674 | **RHD4-02-002-C061-(RD)-Traffic Signage** |  | 2027-04-12 | 2027-04-18 |  |
| RHD4CZ5C061RD8100 |  | Installation of Traffic Signage for Road Network - (RD-C-6 /1)-Z5-C061-RD | 6d | 2027-04-12 | 2027-04-18 | RHD4CZ5C061RD5100 |
|  | 4672 | **RHD4-02-002-C061-(RD)-Precast Interlocking Block Pavers** |  |  |  |  |
|  | 4670 | **RHD4-02-002-C061-(RD)-Bituminous concrete wearing course including tack coat (RC2)** |  | 2027-04-12 | 2027-04-13 |  |
| RHD4CZ5C061RD4100 |  | Supply, lay and compaction Asphaltic wearing course including tack Coat (RC2)for Road Network - (RD-C-6 /1)-Z5-C061-RD | 2d | 2027-04-12 | 2027-04-13 | RHD4CZ5C061RD5100 |
|  | 4673 | **RHD4-02-002-C061-(RD)-Pavement Marking** |  | 2027-04-14 | 2027-04-18 |  |
| RHD4CZ5C061RD7100 |  | Pavement Markings for Road Network - (RD-C-6 /1)-Z5-C061-RD | 4d | 2027-04-14 | 2027-04-18 | RHD4CZ5C061RD4100 |
|  | 4491 | **RHD4-02-002-Z5-C061-Storm Network - ST** |  | 2026-07-28 | 2026-08-20 |  |
|  | 4509 | **RHD4-02-002-C061-(ST)-MH Works - 1500 mm diameter** |  | 2026-07-28 | 2026-08-12 |  |
| RHD4CZ5C061ST3101 |  | Excavation and PC Blinding works for MH 1500 mm - (RD-C-6 /1)-Z5-C061-ST | 3d | 2026-07-28 | 2026-07-30 | RHD4ENSDZ5APPST110, RHD4ENMSST2000, RHD4CZ5C051ST3101 |
| RHD4CZ5C061ST3201 |  | Installation of Base for MH 1500 mm - (RD-C-6 /1)-Z5-C061-ST | 3d | 2026-08-01 | 2026-08-03 | RHD4CZ5C061ST3101, RHD4PRSHLSTAGST1604 |
| RHD4CZ5C061ST3301 |  | MH Ring and C.Slab works and Backfilling works for MH 1500 mm - (RD-C-6 /1)-Z5-C061-ST | 3d | 2026-08-04 | 2026-08-06 | RHD4CZ5C061ST3201, RHD4PRSHLDOSST1604 |
| RHD4CZ5C061ST3401 |  | Steel Cover for MH 1500 mm - (RD-C-6 /1)-Z5-C061-ST | 2d | 2026-08-08 | 2026-08-09 | RHD4CZ5C061ST3301, RHD4PRSHLDOSST1704, RHD4PRSHLSTAGST1704 |
| RHD4CZ5C061ST3501 |  | Finishing, Benching, Testing works for MH 1500 mm - (RD-C-6 /1)-Z5-C061-ST | 3d | 2026-08-10 | 2026-08-12 | RHD4CZ5C061ST3401 |
|  | 4497 | **RHD4-02-002-C061-(ST)-GRP Pipes - 900 mm diameter** |  |  |  |  |
|  | 3752 | **RHD4-02-002-L016-(ST)-MH Works - 1200 mm diameter** |  | 2026-08-01 | 2026-08-11 |  |
| RHD4CZ5C061ST3100 |  | Excavation and PC Blinding works for MH 1200 mm - (RD-C-6 /1)-Z5-C061-ST | 2d | 2026-08-01 | 2026-08-02 | RHD4CZ5C061ST3101 |
| RHD4CZ5C061ST3200 |  | Installation of Base for MH 1200 mm - (RD-C-6 /1)-Z5-C061-ST | 2d | 2026-08-03 | 2026-08-04 | RHD4CZ5C061ST3100 |
| RHD4CZ5C061ST3300 |  | MH Ring and C.Slab works and Backfilling works for MH 1200 mm - (RD-C-6 /1)-Z5-C061-ST | 2d | 2026-08-05 | 2026-08-06 | RHD4CZ5C061ST3200 |
| RHD4CZ5C061ST3400 |  | Steel Cover for MH 1200 mm - (RD-C-6 /1)-Z5-C061-ST | 2d | 2026-08-08 | 2026-08-09 | RHD4CZ5C061ST3300 |
| RHD4CZ5C061ST3500 |  | Finishing, Benching, Testing works for MH 1200 mm - (RD-C-6 /1)-Z5-C061-ST | 2d | 2026-08-10 | 2026-08-11 | RHD4CZ5C061ST3400 |
|  | 1844 | **RHD4-02-002-L016-(ST)-GRP Pipes - 400 mm diameter** |  | 2026-08-08 | 2026-08-18 |  |
| RHD4CZ5C061ST1100 |  | Excavation works for GRP Pipe Line 400 mm - (RD-C-6 /1)-Z5-C061-ST | 2d | 2026-08-08 | 2026-08-09 | RHD4CZ5C061ST3101, RHD4CZ5C061ST1103, RHD4CZ5C061ST3300 |
| RHD4CZ5C061ST1200 |  | Bedding works for GRP Pipe Line 400 mm - (RD-C-6 /1)-Z5-C061-ST | 2d | 2026-08-10 | 2026-08-11 | RHD4CZ5C061ST1100 |
| RHD4CZ5C061ST1300 |  | Installing for GRP Pipe Line 400 mm - (RD-C-6 /1)-Z5-C061-ST | 2d | 2026-08-12 | 2026-08-13 | RHD4CZ5C061ST1200 |
| RHD4CZ5C061ST1400 |  | Primary Test for GRP Pipe Line 400 mm - (RD-C-6 /1)-Z5-C061-ST | 2d | 2026-08-15 | 2026-08-16 | RHD4CZ5C061ST1300 |
| RHD4CZ5C061ST1500 |  | Backfilling and warning tape works for GRP Pipe Line 400 mm - (RD-C-6 /1)-Z5-C061-ST | 2d | 2026-08-17 | 2026-08-18 | RHD4CZ5C061ST1503, RHD4CZ5C061ST1400 |
|  | 3739 | **RHD4-02-002-L016-(ST)-GRP Pipes - 700 mm diameter** |  | 2026-08-03 | 2026-08-13 |  |
| RHD4CZ5C061ST1103 |  | Excavation works for GRP Pipe Line 700 mm - (RD-C-6 /1)-Z5-C061-ST | 2d | 2026-08-03 | 2026-08-04 | RHD4CZ5C061ST3101, RHD4CZ5C061ST1104 |
| RHD4CZ5C061ST1203 |  | Bedding works for GRP Pipe Line 700 mm - (RD-C-6 /1)-Z5-C061-ST | 2d | 2026-08-05 | 2026-08-06 | RHD4CZ5C061ST1103 |
| RHD4CZ5C061ST1303 |  | Installing for GRP Pipe Line 700 mm - (RD-C-6 /1)-Z5-C061-ST | 2d | 2026-08-08 | 2026-08-09 | RHD4CZ5C061ST1203 |
| RHD4CZ5C061ST1403 |  | Primary Test for GRP Pipe Line 700 mm - (RD-C-6 /1)-Z5-C061-ST | 2d | 2026-08-10 | 2026-08-11 | RHD4CZ5C061ST1303 |
| RHD4CZ5C061ST1503 |  | Backfilling and warning tape works for GRP Pipe Line 700 mm - (RD-C-6 /1)-Z5-C061-ST | 2d | 2026-08-12 | 2026-08-13 | RHD4CZ5C061ST1504, RHD4CZ5C061ST1403 |
|  | 4496 | **RHD4-02-002-C061-(ST)-GRP Pipes - 800 mm diameter** |  | 2026-08-01 | 2026-08-11 |  |
| RHD4CZ5C061ST1104 |  | Excavation works for GRP Pipe Line 800 mm - (RD-C-6 /1)-Z5-C061-ST | 2d | 2026-08-01 | 2026-08-02 | RHD4ENSDZ5APPST110, RHD4CZ5C061ST3101 |
| RHD4CZ5C061ST1204 |  | Bedding works for GRP Pipe Line 800 mm - (RD-C-6 /1)-Z5-C061-ST | 2d | 2026-08-03 | 2026-08-04 | RHD4CZ5C061ST1104 |
| RHD4CZ5C061ST1304 |  | Installing for GRP Pipe Line 800 mm - (RD-C-6 /1)-Z5-C061-ST | 2d | 2026-08-05 | 2026-08-06 | RHD4CZ5C061ST1204, RHD4PRSHLSTAGST1004, RHD4PRSHLDOSST1604, RHD4PRSHLPOST1000, RHD4PRSHLDOSST1004 |
| RHD4CZ5C061ST1404 |  | Primary Test for GRP Pipe Line 800 mm - (RD-C-6 /1)-Z5-C061-ST | 2d | 2026-08-08 | 2026-08-09 | RHD4CZ5C061ST1304 |
| RHD4CZ5C061ST1504 |  | Backfilling and warning tape works for GRP Pipe Line 800 mm - (RD-C-6 /1)-Z5-C061-ST | 2d | 2026-08-10 | 2026-08-11 | RHD4CZ5C061ST1404 |
|  | 4506 | **RHD4-02-002-C061-(ST)-UPVC Pipes - 300 mm diameter** |  | 2026-08-08 | 2026-08-20 |  |
| RHD4CZ5C061ST2100 |  | Excavation works for UPVC Pipe Line 300 mm - (RD-C-6 /1)-Z5-C061-ST | 2d | 2026-08-08 | 2026-08-09 | RHD4CZ5C061ST3301, RHD4ENSDZ5APPST110 |
| RHD4CZ5C061ST2200 |  | Bedding works for UPVC Pipe Line 300 mm - (RD-C-6 /1)-Z5-C061-ST | 2d | 2026-08-10 | 2026-08-11 | RHD4CZ5C061ST2100 |
| RHD4CZ5C061ST2300 |  | Installing for UPVC Pipe Line 300 mm - (RD-C-6 /1)-Z5-C061-ST | 2d | 2026-08-12 | 2026-08-13 | RHD4CZ5C061ST2200, RHD4CZ5C061ST7300 SS, RHD4PRSHLDOSST1104, RHD4PRSHLSTAGST1104 |
| RHD4CZ5C061ST2400 |  | Primary Test for UPVC Pipe Line 300 mm - (RD-C-6 /1)-Z5-C061-ST | 2d | 2026-08-15 | 2026-08-16 | RHD4CZ5C061ST2300, RHD4CZ5C061ST6100 |
| RHD4CZ5C061ST2500 |  | Backfilling and warning tape works for UPVC Pipe Line 300 mm - (RD-C-6 /1)-Z5-C061-ST | 2d | 2026-08-19 | 2026-08-20 | RHD4CZ5C061ST2400, RHD4CZ5C061ST6100, RHD4CZ5C061ST1500 |
|  | 4514 | **RHD4-02-002-C061-(ST)-Concrete Encasement** |  | 2026-08-12 | 2026-08-13 |  |
| RHD4CZ5C061ST6100 |  | Pipe Encasement for Storm Pipelines - (RD-C-6 /1)-Z5-C061-ST | 2d | 2026-08-12 | 2026-08-13 | RHD4CZ5C061ST2300 SS, RHD4CZ5C061ST2300 FF, RHD4CZ5C061ST2200 |

| ID | WBS | Task | Duration | Start | Finish | Predecessors |
| --- | --- | --- | --- | --- | --- | --- |
|  | 4515 | **RHD4-02-002-Z5-C061-Catch Basin - ST** |  | 2026-08-08 | 2026-08-19 |  |
|  | 4516 | **RHD4-02-002-C061-(ST)-Single Catch Basin Works** |  | 2026-08-08 | 2026-08-19 |  |
| RHD4CZ5C061ST7100 |  | Excavation works for Single Catch Basin - (RD-C-6 /1)-Z5-C061-ST | 2d | 2026-08-08 | 2026-08-09 | RHD4CZ5C061ST3301, RHD4ENSDZ5APPST110 |
| RHD4CZ5C061ST7200 |  | PC Blinding, Installation and Pipe connection for Single Catch Basin - (RD-C-6 /1)-Z5-C061-ST | 2d | 2026-08-10 | 2026-08-11 | RHD4CZ5C061ST7100 |
| RHD4CZ5C061ST7300 |  | Rings & C.Slab & Final Backfill for Single Catch Basin - (RD-C-6 /1)-Z5-C061-ST | 2d | 2026-08-12 | 2026-08-13 | RHD4CZ5C061ST7200, RHD4PRSHLDOSST1304, RHD4PRSHLSTAGST1304 |
| RHD4CZ5C061ST7400 |  | Steel Cover for Single Catch Basin - (RD-C-6 /1)-Z5-C061-ST | 2d | 2026-08-15 | 2026-08-16 | RHD4CZ5C061ST7300, RHD4PRSHLDOSST1704 |
| RHD4CZ5C061ST7500 |  | Finishing and Insulation works for Single Catch Basin - (RD-C-6 /1)-Z5-C061-ST | 3d | 2026-08-17 | 2026-08-19 | RHD4CZ5C061ST7400 |
|  | 4299 | **RHD4-02-002-Z5-C061-Concrete Box Culvert - ST** |  | 2026-07-12 | 2026-09-03 |  |
|  | 4300 | **RHD4-02-002-L061-(ST)-Concrete Box Culvert** |  | 2026-07-12 | 2026-09-03 |  |
| RHD4CZ5C061ST4100 |  | Excavation works for Box Culvert - (RD-C-6/1)-Z5-C061-ST(Completed) | 9d | 2026-07-12 | 2026-07-21 | RHD4PRSHLDOSST1003 |
| RHD4CZ5C061ST4200 |  | PC works for Box Culvert - (RD-C-6/1)-Z5-C061-ST(Completed) | 5d | 2026-07-22 | 2026-07-27 | RHD4CZ5C061ST4100 |
| RHD4CZ5C061ST4400 |  | Raft works for Box Culvert - (RD-C-6/1)-Z5-C061-ST(Completed) | 7d | 2026-07-28 | 2026-08-04 | RHD4CZ5C061ST4200 |
| RHD4CZ5C061ST4500 |  | Wall and slab works for Box Culvert - (RD-C-6/1)-Z5-C061-ST | 5d | 2026-08-05 | 2026-08-10 | RHD4CZ5C061ST4400, RHD4CZ5C061ST4200, RHD4CZ5C061ST4100 |
| RHD4CZ5C061ST4700 |  | Backfilling works for Box Culvert - (RD-C-6/1)-Z5-C061-ST | 11d | 2026-08-18 | 2026-08-30 | RHD4CZ5C061ST4500, RHD4CZ5C061ST5300 |
| RHD4CZ5C061ST4600 |  | Insulation and Testing for Box Culvert - (RD-C-6/1)-Z5-C061-ST | 4d | 2026-08-31 | 2026-09-03 | RHD4CZ5C061ST4700, RHD4CZ5C061ST5400, RHD4CZ5C061ST3500 |
|  | 4301 | **RHD4-02-002-L061-(ST)-Concrete Chambers** |  | 2026-08-11 | 2026-08-19 |  |
| RHD4CZ5C061ST5100 |  | Excavation and Bedding for Concrete Chambers - for Box Culvert - (RD-C-6/1)-Z5-C061-ST | 2d | 2026-08-11 | 2026-08-12 | RHD4CZ5C061ST4500 |
| RHD4CZ5C061ST5200 |  | PC works for Concrete Chambers - for Box Culvert - (RD-C-6/1)-Z5-C061-ST | 2d | 2026-08-13 | 2026-08-15 | RHD4CZ5C061ST5100 |
| RHD4CZ5C061ST5300 |  | Installation for Concrete Chambers - for Box Culvert - (RD-C-6/1)-Z5-C061-ST | 2d | 2026-08-16 | 2026-08-17 | RHD4CZ5C061ST5200 |
| RHD4CZ5C061ST5400 |  | Backfilling works for Concrete Chambers - for Box Culvert - (RD-C-6/1)-Z5-C061-ST | 2d | 2026-08-18 | 2026-08-19 | RHD4CZ5C061ST5300 |
|  | 4540 | **RHD4-02-002-Z5-C061-Sewage Network - SW** |  | 2026-08-12 | 2026-09-17 |  |
|  | 1 | **Missing ID** |  | 2026-08-19 | 2026-09-08 |  |
| RHD4CZ5C061SW4100 |  | Excavation and Bedding for Wash out Chamber for HDPE force Main - (RD-C-6 /1)-Z5-C061-SW | 2d | 2026-08-19 | 2026-08-20 | RHD4CZ5C061ST3101 SS, RHD4CZ5C061SW2600 |
| RHD4CZ5C061SW4200 |  | PC works for Wash out Chamber for HDPE force Main - (RD-C-6 /1)-Z5-C061-SW | 2d | 2026-08-21 | 2026-08-22 | RHD4CZ5C061SW4100 |
| RHD4CZ5C061SW4300 |  | Installation for Wash out Chamber for HDPE force Main - (RD-C-6 /1)-Z5-C061-SW | 2d | 2026-08-23 | 2026-08-24 | RHD4CZ5C061SW4200 |
| RHD4CZ5C061SW4400 |  | Backfilling works for Wash out Chamber for HDPE force Main - (RD-C-6 /1)-Z5-C061-SW | 2d | 2026-08-25 | 2026-08-26 | RHD4CZ5C061SW4300 |
| RHD4CZ5C061SW5100 |  | Installation for Wash out Valves for HDPE force Main - (RD-C-6 /1)-Z5-C061-SW | 2d | 2026-08-27 | 2026-08-28 | RHD4CZ5C061SW4400 |
| RHD4CZ5C061SW5200 |  | Stem and Service box for Wash out Valves for HDPE force Main - (RD-C-6 /1)-Z5-C061-SW | 2d | 2026-09-07 | 2026-09-08 | RHD4CZ5C061SW5100, RHD4CZ5C061SW3000 |
|  | 4358 | **RHD4-02-002-C061-(SW)-HDPE Pipes - 250 mm diameter** |  | 2026-08-17 | 2026-09-06 |  |
| RHD4CZ5C061SW2600 |  | Excavation works for HDPE Force Main Pipeline 250 mm - (RD-C-6 /1)-Z5-C061-SW | 2d | 2026-08-17 | 2026-08-18 | RHD4CZ5C061SW3100 |
| RHD4CZ5C061SW2700 |  | Bedding works for HDPE Force Main Pipeline 250 mm - (RD-C-6 /1)-Z5-C061-SW | 2d | 2026-08-19 | 2026-08-20 | RHD4CZ5C061SW2600 |
| RHD4CZ5C061SW2800 |  | Installing for HDPE Force Main Pipeline 250 mm - (RD-C-6 /1)-Z5-C061-SW | 2d | 2026-08-22 | 2026-08-23 | RHD4CZ5C061SW2700 |
| RHD4CZ5C061SW2900 |  | Primary Test for HDPE Force Main Pipeline 250 mm - (RD-C-6 /1)-Z5-C061-SW | 2d | 2026-08-24 | 2026-08-25 | RHD4CZ5C061SW2800 |
| RHD4CZ5C061SW3000 |  | Backfilling and warning tape works for HDPE Force Main Pipeline 250 mm - (RD-C-6 /1)-Z5-C061-SW | 2d | 2026-09-05 | 2026-09-06 | RHD4CZ5C061ST4600, RHD4CZ5C061SW2900 |
|  | 4550 | **RHD4-02-002-C061-(SW)-MH Works - 1200 mm diameter** |  | 2026-08-12 | 2026-09-13 |  |
| RHD4CZ5C061SW3100 |  | Excavation and PC Blinding works for MH 1200 mm - (RD-C-6 /1)-Z5-C061-SW | 4d | 2026-08-12 | 2026-08-16 | RHD4ENSDZ5APPSW120, RHD4CZ5C061ST1504 |
| RHD4CZ5C061SW3200 |  | Installation of Base for MH 1200 mm - (RD-C-6 /1)-Z5-C061-SW | 7d | 2026-08-17 | 2026-08-24 | RHD4CZ5C061SW3100 |
| RHD4CZ5C061SW3300 |  | MH Ring and C.Slab works and Backfilling works for MH 1200 mm - (RD-C-6 /1)-Z5-C061-SW | 7d | 2026-08-25 | 2026-09-01 | RHD4CZ5C061SW3200 |
| RHD4CZ5C061SW3400 |  | Steel Cover for MH 1200 mm - (RD-C-6 /1)-Z5-C061-SW | 3d | 2026-09-02 | 2026-09-05 | RHD4CZ5C061SW3300, RHD4PRSHLDOSSW1404, RHD4PRSHLSTAGSW1404 |
| RHD4CZ5C061SW3500 |  | Finishing, Benching, Testing works for MH 1200 mm - (RD-C-6 /1)-Z5-C061-SW | 7d | 2026-09-06 | 2026-09-13 | RHD4CZ5C061SW3400 |
|  | 4551 | **RHD4-02-002-C061-(SW)-MH Works - 1200 mm diameter with Back drop** |  | 2026-08-17 | 2026-09-15 |  |
| RHD4CZ5C061SW3101 |  | Excavation and PC Blinding works for MH 1200 mm - (RD-C-6 /1)-Z5-C061-SW | 2d | 2026-08-17 | 2026-08-18 | RHD4CZ5C061SW3100, RHD4ENSDZ5APPSW120 |
| RHD4CZ5C061SW3201 |  | Installation of Base for MH 1200 mm - (RD-C-6 /1)-Z5-C061-SW | 2d | 2026-08-19 | 2026-08-20 | RHD4CZ5C061SW3101 |
| RHD4CZ5C061SW3301 |  | MH Ring and C.Slab works and Backfilling works for MH 1200 mm - (RD-C-6 /1)-Z5-C061-SW | 2d | 2026-08-22 | 2026-08-23 | RHD4CZ5C061SW3201 |
| RHD4CZ5C061SW3401 |  | Steel Cover for MH 1200 mm - (RD-C-6 /1)-Z5-C061-SW | 2d | 2026-09-06 | 2026-09-07 | RHD4CZ5C061SW3301, RHD4PRSHLDOSSW1404, RHD4PRSHLSTAGSW1404, RHD4CZ5C061SW3400 |
| RHD4CZ5C061SW3501 |  | Finishing, Benching, Testing works for MH 1200 mm - (RD-C-6 /1)-Z5-C061-SW | 2d | 2026-09-14 | 2026-09-15 | RHD4CZ5C061SW3401, RHD4CZ5C061SW3500 |
|  | 4542 | **RHD4-02-002-C061-(SW)-GRP Pipes - 400 mm diameter** |  | 2026-09-02 | 2026-09-13 |  |
| RHD4CZ5C061SW1101 |  | Excavation works for GRP Pipe Line 400 mm - (RD-C-6 /1)-Z5-C061-SW | 2d | 2026-09-02 | 2026-09-03 | RHD4ENSDZ5APPSW120, RHD4CZ5C061SW3300, RHD4CZ5C061SW3301 |
| RHD4CZ5C061SW1201 |  | Bedding works for GRP Pipe Line 400 mm - (RD-C-6 /1)-Z5-C061-SW | 2d | 2026-09-05 | 2026-09-06 | RHD4CZ5C061SW1101 |
| RHD4CZ5C061SW1301 |  | Installing for GRP Pipe Line 400 mm - (RD-C-6 /1)-Z5-C061-SW | 2d | 2026-09-07 | 2026-09-08 | RHD4CZ5C061SW1201, RHD4CZ5C061SW3300, RHD4CZ5C061SW3301, RHD4PRSHLSTAGSW1104, RHD4PRSHLDOSSW1304, RHD4PRSHLPOSW1100, RHD4PRSHLDOSSW1104 |
| RHD4CZ5C061SW1401 |  | Primary Test for GRP Pipe Line 400 mm - (RD-C-6 /1)-Z5-C061-SW | 2d | 2026-09-09 | 2026-09-10 | RHD4CZ5C061SW1301 |
| RHD4CZ5C061SW1501 |  | Backfilling and warning tape works for GRP Pipe Line 400 mm - (RD-C-6 /1)-Z5-C061-SW | 2d | 2026-09-12 | 2026-09-13 | RHD4CZ5C061SW1401 |
|  | 4541 | **RHD4-02-002-C061-(SW)-GRP Pipes - 300 mm diameter** |  | 2026-09-05 | 2026-09-15 |  |
| RHD4CZ5C061SW1100 |  | Excavation works for GRP Pipe Line 300 mm - (RD-C-6 /1)-Z5-C061-SW | 2d | 2026-09-05 | 2026-09-06 | RHD4CZ5C061SW1101, RHD4ENSDZ5APPSW120 |
| RHD4CZ5C061SW1200 |  | Bedding works for GRP Pipe Line 300 mm - (RD-C-6 /1)-Z5-C061-SW | 2d | 2026-09-07 | 2026-09-08 | RHD4CZ5C061SW1100 |
| RHD4CZ5C061SW1300 |  | Installing for GRP Pipe Line 300 mm - (RD-C-6 /1)-Z5-C061-SW | 2d | 2026-09-09 | 2026-09-10 | RHD4CZ5C061SW1200, RHD4CZ5C061SW1301, RHD4CZ5C061SW3300, RHD4CZ5C061SW3301, RHD4PRSHLSTAGSW1104, RHD4PRSHLDOSSW1304, RHD4PRSHLPOSW1100, RHD4PRSHLDOSSW1104 |
| RHD4CZ5C061SW1400 |  | Primary Test for GRP Pipe Line 300 mm - (RD-C-6 /1)-Z5-C061-SW | 2d | 2026-09-12 | 2026-09-13 | RHD4CZ5C061SW1300, RHD4CZ5C061SW1401 |
| RHD4CZ5C061SW1500 |  | Backfilling and warning tape works for GRP Pipe Line 300 mm - (RD-C-6 /1)-Z5-C061-SW | 2d | 2026-09-14 | 2026-09-15 | RHD4CZ5C061SW1400, RHD4CZ5C061SW1501 |
|  | 4546 | **RHD4-02-002-C061-(SW)-UPVC Pipes - 200 mm diameter** |  | 2026-09-02 | 2026-09-17 |  |
| RHD4CZ5C061SW2100 |  | Excavation works for UPVC Pipe Line 200 mm - (RD-C-6 /1)-Z5-C061-SW | 2d | 2026-09-02 | 2026-09-03 | RHD4CZ5C061SW3300, RHD4CZ5C061SW3301, RHD4ENSDZ5APPSW120, RHD4PRSHLSTAGIRR1000, RHD4ENMSEW2000, RHD4ENMSEW2010, RHD4ENSDZ5APPEW100 SS |
| RHD4CZ5C061SW2200 |  | Bedding works for UPVC Pipe Line 200 mm - (RD-C-6 /1)-Z5-C061-SW | 2d | 2026-09-05 | 2026-09-06 | RHD4CZ5C061SW2100 |
| RHD4CZ5C061SW2300 |  | Installing for UPVC Pipe Line 200 mm - (RD-C-6 /1)-Z5-C061-SW | 2d | 2026-09-12 | 2026-09-13 | RHD4CZ5C061SW2200, RHD4CZ5C061SW1300, RHD4PRSHLSTAGSW1004, RHD4PRSHLPOSW1000, RHD4PRSHLDOSSW1004, RHD4PRSHLDOSSW1304, RHD4PRSHLPOSW1100, RHD4PRSHLDOSSW1104 |
| RHD4CZ5C061SW2400 |  | Primary Test for UPVC Pipe Line 200 mm - (RD-C-6 /1)-Z5-C061-SW | 2d | 2026-09-14 | 2026-09-15 | RHD4CZ5C061SW2300, RHD4CZ5C061SW1400 |
| RHD4CZ5C061SW2500 |  | Backfilling and warning tape works for UPVC Pipe Line 200 mm - (RD-C-6 /1)-Z5-C061-SW | 2d | 2026-09-16 | 2026-09-17 | RHD4CZ5C061SW2400, RHD4CZ5C061SW1500 |
|  | 4549 | **RHD4-02-002-C061-(SW)-Concrete Encasement** |  |  |  |  |
|  | 4577 | **RHD4-02-002-Z5-C061-Potable Network - PT** |  | 2026-09-19 | 2026-10-07 |  |
|  | 4579 | **RHD4-02-002-C061-(PT)-HDPE Pipes - 160 mm diameter** |  | 2026-09-19 | 2026-10-05 |  |
| RHD4CZ5C061PT1101 |  | Excavation works for HDPE Pipline 160 mm - (RD-C-6 /1)-Z5-C061-PT | 2d | 2026-09-19 | 2026-09-20 | RHD4ENSDZ5APPPT130, RHD4ENMSPT2000, RHD4CZ5C061SW2500 |
| RHD4CZ5C061PT1201 |  | Bedding works for HDPE Pipline 160 mm - (RD-C-6 /1)-Z5-C061-PT | 2d | 2026-09-21 | 2026-09-22 | RHD4CZ5C061PT1101 |
| RHD4CZ5C061PT1301 |  | Installing for HDPE Pipline 160 mm - (RD-C-6 /1)-Z5-C061-PT | 3d | 2026-09-24 | 2026-09-27 | RHD4CZ5C061PT1201, RHD4PRSHLDOSPT1000, RHD4PRSHLSTAGPT1000 |

| ID | WBS | Task | Duration | Start | Finish | Predecessors |
| --- | --- | --- | --- | --- | --- | --- |
| RHD4CZ5C061PT1401 |  | Primary Test for HDPE Pipline 160 mm - (RD-C-6 /1)-Z5-C061-PT | 2d | 2026-09-30 | 2026-10-01 | RHD4CZ5C061PT1301, RHD4CZ5C061PT5100, RHD4CZ5C061PT3100 |
| RHD4CZ5C061PT1501 |  | Backfilling and warning tape works for HDPE Pipline 160 mm - (RD-C-6 /1)-Z5-C061-PT | 3d | 2026-10-03 | 2026-10-05 | RHD4CZ5C061PT1401 |
|  | 2888 | **RHD4-02-002-C061-(PT)-Fire Hydrant** |  | 2026-09-24 | 2026-10-05 |  |
| RHD4CZ5C061PT4100 |  | Excavation and Bedding and Pipe Installation for Fire Hydrant - (ROUND-07)-Z5-RA07-PT | 2d | 2026-09-24 | 2026-09-26 | RHD4CZ5C061PT2101 |
| RHD4CZ5C061PT4200 |  | Valve Installation for Fire Hydrant - (ROUND-07)-Z5-RA07-PT | 2d | 2026-09-27 | 2026-09-28 | RHD4CZ5C061PT4100 |
| RHD4CZ5C061PT4300 |  | Stem for Fire Hydrant - (ROUND-07)-Z5-RA07-PT | 2d | 2026-09-29 | 2026-09-30 | RHD4CZ5C061PT4200 |
| RHD4CZ5C061PT4400 |  | Fire Installation for Fire Hydrant - (ROUND-07)-Z5-RA07-PT | 2d | 2026-10-01 | 2026-10-03 | RHD4CZ5C061PT4300 |
| RHD4CZ5C061PT4500 |  | Protection Barriers for Fire Hydrant - (ROUND-07)-Z5-RA07-PT | 2d | 2026-10-04 | 2026-10-05 | RHD4CZ5C061PT4400 |
|  | 4586 | **RHD4-02-002-C061-(PT)-Wash out Valve Chambers** |  | 2026-09-21 | 2026-09-30 |  |
| RHD4CZ5C061PT2101 |  | Excavation and Bedding for Wash out Valve Chambers for Potable Water Network - (RD-C-6 /1)-Z5-C061-PT | 2d | 2026-09-21 | 2026-09-22 | RHD4ENSDZ5APPPT130, RHD4CZ5C061PT1101 |
| RHD4CZ5C061PT2201 |  | PC works for Wash out Valve Chambers for Potable Water Network - (RD-C-6 /1)-Z5-C061-PT | 2d | 2026-09-24 | 2026-09-26 | RHD4CZ5C061PT2101 |
| RHD4CZ5C061PT2301 |  | Installation for Wash out Valve Chambers for Potable Water Network - (RD-C-6 /1)-Z5-C061-PT | 2d | 2026-09-27 | 2026-09-28 | RHD4CZ5C061PT2201, RHD4PRSHLDOSPT1100, RHD4PRSHLDOSPT1400, RHD4PRSHLSTAGPT1100, RHD4PRSHLSTAGPT1400 |
| RHD4CZ5C061PT2401 |  | Backfilling works for Wash out Valve Chambers for Potable Water Network - (RD-C-6 /1)-Z5-C061-PT | 2d | 2026-09-29 | 2026-09-30 | RHD4CZ5C061PT2301 |
|  | 4587 | **RHD4-02-002-C061-(PT)-Wash out Valves** |  | 2026-09-29 | 2026-10-03 |  |
| RHD4CZ5C061PT3102 |  | Installation for Wash out Valves for Potable Water Network - (RD-C-6 /1)-Z5-C061-PT | 2d | 2026-09-29 | 2026-09-30 | RHD4CZ5C061PT2301, RHD4PRSHLDOSPT1200, RHD4PRSHLSTAGPT1200 |
| RHD4CZ5C061PT3202 |  | Stem and Service box for Wash out Valves for Potable Water Network - (RD-C-6 /1)-Z5-C061-PT | 2d | 2026-10-01 | 2026-10-03 | RHD4CZ5C061PT3102, RHD4CZ5C061PT2401, RHD4PRSHLDOSPT1300, RHD4PRSHLSTAGPT1300 |
|  | 4591 | **RHD4-02-002-C061-(PT)-Concrete Encasement** |  | 2026-09-24 | 2026-09-29 |  |
| RHD4CZ5C061PT5100 |  | Pipe Encasement for Potable Pipelines - (RD-C-6 /1)-Z5-C061-PT | 5d | 2026-09-24 | 2026-09-29 | RHD4CZ5C061PT1301 FF, RHD4CZ5C061PT1301 SS, RHD4CZ5C061PT1201 |
|  | 4583 | **RHD4-02-002-C061-(PT)-Gate Valves (Direct Buried)** |  | 2026-09-26 | 2026-10-07 |  |
| RHD4CZ5C061PT3100 |  | Installation for Direct Buried Gate Valves - (RD-C-6 /1)-Z5-C061-PT | 2d | 2026-09-26 | 2026-09-27 | RHD4CZ5C061PT1301 FF, RHD4CZ5C061PT1301 SS, RHD4PRSHLDOSPT1200, RHD4PRSHLSTAGPT1200, RHD4CZ5C061RD3100 |
| RHD4CZ5C061PT3200 |  | Stem and Service box for Direct Buried Gate Valves - (RD-C-6 /1)-Z5-C061-PT | 2d | 2026-10-06 | 2026-10-07 | RHD4CZ5C061PT3100, RHD4CZ5C061PT1501 |
|  | 4592 | **RHD4-02-002-Z5-C061-Irrigation Network - IRR** |  | 2026-09-21 | 2026-10-03 |  |
|  | 4595 | **RHD4-02-002-C061-(IRR)-HDPE Pipes - 200 mm diameter** |  | 2026-09-21 | 2026-10-03 |  |
| RHD4CZ5C061IRR1102 |  | Excavation works for HDPE Pipline 200 mm - (RD-C-6 /1)-Z5-C061-IRR | 2d | 2026-09-21 | 2026-09-22 | RHD4CZ5C061PT1101, RHD4ENSDZ5APPIRR140, RHD4ENMSRR2000 |
| RHD4CZ5C061IRR1202 |  | Bedding works for HDPE Pipline 200 mm - (RD-C-6 /1)-Z5-C061-IRR | 2d | 2026-09-24 | 2026-09-26 | RHD4CZ5C061IRR1102 |
| RHD4CZ5C061IRR1302 |  | Installing for HDPE Pipline 200 mm - (RD-C-6 /1)-Z5-C061-IRR | 2d | 2026-09-27 | 2026-09-28 | RHD4CZ5C061IRR1202, RHD4PRSHLDOSIRR1000, RHD4PRSHLSTAGIRR1000 |
| RHD4CZ5C061IRR1402 |  | Primary Test for HDPE Pipline 200 mm - (RD-C-6 /1)-Z5-C061-IRR | 2d | 2026-09-29 | 2026-09-30 | RHD4CZ5C061IRR1302 |
| RHD4CZ5C061IRR1502 |  | Backfilling and warning tape works for HDPE Pipline 200 mm - (RD-C-6 /1)-Z5-C061-IRR | 2d | 2026-10-01 | 2026-10-03 | RHD4CZ5C061IRR1402 |
|  | 4601 | **RHD4-02-002-C061-(IRR)-Gate Valves (Direct Buried)** |  |  |  |  |
|  | 4609 | **RHD4-02-002-Z5-C061-Crossings Irrigation Network - IRRC** |  |  |  |  |
|  | 4621 | **RHD4-02-002-C061-(IRRC)-Wash out Chamber** |  |  |  |  |
|  | 4622 | **RHD4-02-002-C061-(IRRC)-Wash out Valves** |  |  |  |  |
|  | 4626 | **RHD4-02-002-Z5-C061-Medium Voltage Network - MV** |  | 2026-10-04 | 2027-02-21 |  |
|  | 4627 | **RHD4-02-002-C061-(MV)-Medium Voltage cable trench** |  | 2027-01-27 | 2027-02-06 |  |
| RHD4CZ5C061MV1100 |  | Excavation for Medium Voltage Trench - (RD-C-6 /1)-Z5-C061-MV | 3d | 2027-01-27 | 2027-01-30 | RHD4ENSDZ5APPMV150, RHD4CZ5C061RD3100, RHD4CZ5RA07MV5400 |
| RHD4CZ5C061MV1200 |  | Trench Backfilling for Medium Voltage Network - (RD-C-6 /1)-Z5-C061-MV | 3d | 2027-02-03 | 2027-02-06 | RHD4CZ5C061MV3101, RHD4CZ5C061MV3100 |
|  | 4628 | **RHD4-02-002-C061-(MV)-Medium Voltage duct banks** |  | 2026-10-04 | 2026-10-12 |  |
| RHD4CZ5C061MV2100 |  | Excavation of Duct Banks for Medium Voltage Network - (RD-C-6 /1)-Z5-C061-MV | 2d | 2026-10-04 | 2026-10-05 | RHD4ENSDZ5APPMV150, RHD4CZ5C061IRR1102, RHD4CZ5C061IRR1502 |
| RHD4CZ5C061MV2200 |  | Installation of Duct Banks for Medium Voltage Network - (RD-C-6 /1)-Z5-C061-MV | 2d | 2026-10-06 | 2026-10-07 | RHD4CZ5C061MV2100, RHD4PRSHLDOSMV1000, RHD4PRSHLSTAGMV1000 |
| RHD4CZ5C061MV2300 |  | Pouring of Duct Banks for Medium Voltage Network - (RD-C-6 /1)-Z5-C061-MV | 2d | 2026-10-08 | 2026-10-10 | RHD4CZ5C061MV2200 |
| RHD4CZ5C061MV2400 |  | Backfilling of Duct Banks for Medium Voltage Network - (RD-C-6 /1)-Z5-C061-MV | 2d | 2026-10-11 | 2026-10-12 | RHD4CZ5C061MV2300 |
|  | 4629 | **RHD4-02-002-C061-(MV)-Medium Voltage cables 3Cx 500 mm²** |  | 2027-01-31 | 2027-02-10 |  |
| RHD4CZ5C061MV3100 |  | Installation of Medium Voltage Cables 3Cx 500 mm² - (RD-C-6 /1)-Z5-C061-MV | 3d | 2027-01-31 | 2027-02-02 | RHD4CZ5C061MV1100, RHD4PRSHLDOSMV1100, RHD4ENMSMV2000, RHD4ENMSMV2010, RHD4PRSHLSTAGMV1100, RHD4CZ5C061MV2400 |
| RHD4CZ5C061MV3300 |  | Testing of Medium Voltage Cables 3Cx 500 mm² - (RD-C-6 /1)-Z5-C061-MV | 2d | 2027-02-07 | 2027-02-08 | RHD4CZ5C061MV1200, RHD4CZ5C061MV3100 |
| RHD4CZ5C061MV3400 |  | Termination of Medium Voltage Cables 3Cx 500 mm² - (RD-C-6 /1)-Z5-C061-MV | 2d | 2027-02-09 | 2027-02-10 | RHD4CZ5C061MV3300 |
|  | 4630 | **RHD4-02-002-C061-(MV)-Medium Voltage cables 3Cx 50 mm²** |  | 2027-01-31 | 2027-02-10 |  |
| RHD4CZ5C061MV3101 |  | Installation of Medium Voltage Cables 3Cx 50 mm² - (RD-C-6 /1)-Z5-C061-MV | 2d | 2027-01-31 | 2027-02-01 | RHD4CZ5C061MV1100, RHD4PRSHLDOSMV1200, RHD4ENMSMV2000, RHD4ENMSMV2010, RHD4PRSHLSTAGMV1200 |
| RHD4CZ5C061MV3301 |  | Testing of Medium Voltage Cables 3Cx 50 mm² - (RD-C-6 /1)-Z5-C061-MV | 2d | 2027-02-07 | 2027-02-08 | RHD4CZ5C061MV3101, RHD4CZ5C061MV1200 |
| RHD4CZ5C061MV3401 |  | Termination of Medium Voltage Cables 3Cx 50 mm² - (RD-C-6 /1)-Z5-C061-MV | 2d | 2027-02-09 | 2027-02-10 | RHD4CZ5C061MV3301 |
|  | 4632 | **RHD4-02-002-C061-(MV)-Unit Substations** |  | 2027-02-07 | 2027-02-21 |  |
| RHD4CZ5C061MV5100 |  | Excavation for Unit Substations for Medium Voltage Network - (RD-C-6 /1)-Z5-C061-MV | 2d | 2027-02-07 | 2027-02-08 | RHD4CZ5C061MV1200, RHD4ENSDZ5APPMV150 |
| RHD4CZ5C061MV5200 |  | Concrete Base Placement for Unit Substations for Medium Voltage Network - (RD-C-6 /1)-Z5-C061-MV | 2d | 2027-02-09 | 2027-02-10 | RHD4CZ5C061MV5100 |
| RHD4CZ5C061MV5300 |  | Installation for Fences and doors for Medium Voltage Network - (RD-C-6 /1)-Z5-C061-MV | 5d | 2027-02-11 | 2027-02-16 | RHD4CZ5C061MV5200 |
| RHD4CZ5C061MV5400 |  | Installation for Unit Substations for Medium Voltage Network - (RD-C-6 /1)-Z5-C061-MV | 4d | 2027-02-17 | 2027-02-21 | RHD4CZ5C061MV5300 |
|  | 4633 | **RHD4-02-002-Z5-C061-Low Voltage Network - LV** |  | 2026-12-09 | 2027-01-06 |  |
|  | 4634 | **RHD4-02-002-C061-(LV)-Low Voltage duct banks** |  | 2026-12-09 | 2026-12-17 |  |
| RHD4CZ5C061LV2100 |  | Excavation of Duct Banks for Low Voltage Network - (RD-C-6 /1)-Z5-C061-LV | 2d | 2026-12-09 | 2026-12-10 | RHD4CZ5C061RW3000, RHD4ENSDZ5APPLV160, RHD4CZ5RA07SL2100 |
| RHD4CZ5C061LV2200 |  | Installation of Duct Banks for Low Voltage Network - (RD-C-6 /1)-Z5-C061-LV | 2d | 2026-12-12 | 2026-12-13 | RHD4CZ5C061LV2100, RHD4PRSHLDOSLV1000, RHD4PRSHLSTAGLV1000 |
| RHD4CZ5C061LV2300 |  | Pouring of Duct Banks for Low Voltage Network - (RD-C-6 /1)-Z5-C061-LV | 2d | 2026-12-14 | 2026-12-15 | RHD4CZ5C061LV2200 |
| RHD4CZ5C061LV2400 |  | Backfilling of Duct Banks for Low Voltage Network - (RD-C-6 /1)-Z5-C061-LV | 2d | 2026-12-16 | 2026-12-17 | RHD4CZ5C061LV2300 |
|  | 4636 | **RHD4-02-002-C061-(LV)-Low Voltage cables** |  | 2026-12-19 | 2026-12-30 |  |
| RHD4CZ5C061LV3100 |  | Excavation for Low Voltage Cables for Low Voltage Network - (RD-C-6 /1)-Z5-C061-LV | 3d | 2026-12-19 | 2026-12-21 | RHD4ENSDZ5APPLV160, RHD4CZ5C061LV2400 |
| RHD4CZ5C061LV3200 |  | Cable Laying of Low Voltage Cables for Low Voltage Network - (RD-C-6 /1)-Z5-C061-LV | 3d | 2026-12-22 | 2026-12-24 | RHD4CZ5C061LV3100, RHD4PRSHLDOSLV1100, RHD4ENMSLV2000, RHD4ENMSLV2010, RHD4PRSHLSTAGLV1100 |
| RHD4CZ5C061LV3300 |  | Warning tape and Backfill for Low Voltage Cables for Low Voltage Network - (RD-C-6 /1)-Z5-C061-LV | 3d | 2026-12-26 | 2026-12-28 | RHD4CZ5C061LV3200 |
| RHD4CZ5C061LV3400 |  | Testing of Low Voltage Cables for Low Voltage Network - (RD-C-6 /1)-Z5-C061-LV | 2d | 2026-12-29 | 2026-12-30 | RHD4CZ5C061LV3300 |
|  | 4637 | **RHD4-02-002-C061-(LV)-Low Voltage Distribution Pillars** |  | 2026-12-31 | 2027-01-06 |  |
| RHD4CZ5C061LV4100 |  | Leveling for Distribution Pillars for Low Voltage Network - (RD-C-6 /1)-Z5-C061-LV | 2d | 2026-12-31 | 2027-01-02 | RHD4CZ5C061LV3400 |
| RHD4CZ5C061LV4200 |  | Lean Concrete for Distribution Pillars for Low Voltage Network - (RD-C-6 /1)-Z5-C061-LV | 2d | 2027-01-03 | 2027-01-04 | RHD4CZ5C061LV4100 |
| RHD4CZ5C061LV4300 |  | Installation of Distribution Pillars for Low Voltage Network - (RD-C-6 /1)-Z5-C061-LV | 2d | 2027-01-05 | 2027-01-06 | RHD4CZ5C061LV4200, RHD4PRSHLDOSLV1200, RHD4PRSHLDOSLV1300, RHD4PRSHLSTAGLV1200, RHD4PRSHLSTAGLV1300 |
|  | 4638 | **RHD4-02-002-C061-(LV)-Low Voltage Distribution Pillars Earthing** |  |  |  |  |

| ID | WBS | Task | Duration | Start | Finish | Predecessors |
| --- | --- | --- | --- | --- | --- | --- |
|  | 4639 | **RHD4-02-002-Z5-C061-Street Lighting Network - SL** |  | 2026-12-12 | 2027-02-03 |  |
|  | 4640 | **RHD4-02-002-C061-(SL)-Street Lighting duct banks** |  | 2026-12-12 | 2026-12-30 |  |
| RHD4CZ5C061SL2100 |  | Excavation of Duct Banks for Street Lighting Network - (RD-C-6 /1)-Z5-C061-SL | 4d | 2026-12-12 | 2026-12-15 | RHD4CZ5C061LV2100, RHD4ENSDZ5APPSL170 |
| RHD4CZ5C061SL2200 |  | Installation of Duct Banks for Street Lighting Network - (RD-C-6 /1)-Z5-C061-SL | 6d | 2026-12-16 | 2026-12-22 | RHD4CZ5C061SL2100, RHD4CZ5C061LV2200, RHD4PRSHLDOSSL1000, RHD4PRSHLSTAGSL1000 |
| RHD4CZ5C061SL2300 |  | Pouring of Duct Banks for Street Lighting Network - (RD-C-6 /1)-Z5-C061-SL | 4d | 2026-12-23 | 2026-12-27 | RHD4CZ5C061SL2200, RHD4CZ5C061LV2300 |
| RHD4CZ5C061SL2400 |  | Backfilling of Duct Banks for Street Lighting Network - (RD-C-6 /1)-Z5-C061-SL | 3d | 2026-12-28 | 2026-12-30 | RHD4CZ5C061SL2300, RHD4CZ5C061LV2400 |
|  | 4641 | **RHD4-02-002-C061-(SL)-Street Lighting Drawpit** |  | 2027-01-07 | 2027-01-11 |  |
| RHD4CZ5C061SL5100 |  | Excavation of Drawpit size 600x600x900mm for Street Lighting Network - (RD-C-6 /1)-Z5-C061-SL | 2d | 2027-01-07 | 2027-01-09 | RHD4CZ5C061SL2300, RHD4ENSDZ5APPSL170, RHD4CZ5C061LV4300 |
| RHD4CZ5C061SL5200 |  | Installation of Drawpit size 600x600x900mm for Street Lighting Network - (RD-C-6 /1)-Z5-C061-SL | 2d | 2027-01-10 | 2027-01-11 | RHD4CZ5C061SL5100, RHD4PRSHLDOSSL1400, RHD4PRSHLSTAGSL1400 |
|  | 4642 | **RHD4-02-002-C061-(SL)-Street Lighting cables** |  | 2027-01-12 | 2027-01-20 |  |
| RHD4CZ5C061SL3100 |  | Excavation for Street Lighting Cables for Street Lighting Network - (RD-C-6 /1)-Z5-C061-SL | 2d | 2027-01-12 | 2027-01-13 | RHD4ENSDZ5APPSL170, RHD4CZ5C061SL5200 |
| RHD4CZ5C061SL3200 |  | Cable Laying of Street Lighting Cables for Street Lighting Network - (RD-C-6 /1)-Z5-C061-SL | 2d | 2027-01-14 | 2027-01-16 | RHD4CZ5C061SL3100, RHD4PRSHLDOSSL1100, RHD4ENMSSL2000, RHD4ENMSSL2010, RHD4PRSHLSTAGSL1100 |
| RHD4CZ5C061SL3300 |  | Warning tape and Backfill for Street Lighting Cables for Street Lighting Network - (RD-C-6 /1)-Z5-C061-SL | 2d | 2027-01-17 | 2027-01-18 | RHD4CZ5C061SL3200 |
| RHD4CZ5C061SL3400 |  | Testing of Street Lighting Cables for Street Lighting Network - (RD-C-6 /1)-Z5-C061-SL | 2d | 2027-01-19 | 2027-01-20 | RHD4CZ5C061SL3300 |
|  | 4643 | **RHD4-02-002-C061-(SL)-Street Lighting Poles** |  | 2027-01-21 | 2027-02-01 |  |
| RHD4CZ5C061SL1100 |  | Excavation for RC Base for Lighting Poles for Street Lighting Network - (RD-C-6 /1)-Z5-C061-SL | 2d | 2027-01-21 | 2027-01-23 | RHD4ENSDZ5APPSL170, RHD4CZ5C061SL3400 |
| RHD4CZ5C061SL1200 |  | Installation for RC Base for Lighting Poles for Street Lighting Network - (RD-C-6 /1)-Z5-C061-SL | 2d | 2027-01-24 | 2027-01-25 | RHD4CZ5C061SL1100 |
| RHD4CZ5C061SL1300 |  | Backfill for RC Base for Lighting Poles for Street Lighting Network - (RD-C-6 /1)-Z5-C061-SL | 2d | 2027-01-26 | 2027-01-27 | RHD4CZ5C061SL1200 |
| RHD4CZ5C061SL1400 |  | Installation for Lighting Poles for Street Lighting Network - (RD-C-6 /1)-Z5-C061-SL | 2d | 2027-01-28 | 2027-01-30 | RHD4CZ5C061SL1300, RHD4PRSHLDOSSL1200, RHD4ENMSSL2000, RHD4ENMSSL2010, RHD4PRSHLSTAGSL1200 |
| RHD4CZ5C061SL1500 |  | Luminaire Installation for Lighting Poles for Street Lighting Network - (RD-C-6 /1)-Z5-C061-SL | 2d | 2027-01-31 | 2027-02-01 | RHD4CZ5C061SL1400, RHD4PRSHLDOSSL1300, RHD4PRSHLSTAGSL1300 |
|  | 4644 | **RHD4-02-002-C061-(SL)-Street Lighting Feeder Pillars** |  | 2027-01-19 | 2027-02-01 |  |
| RHD4CZ5C061SL4100 |  | Leveling for Distribution Pillars for Street Lighting Network - (RD-C-6 /1)-Z5-C061-SL | 2d | 2027-01-19 | 2027-01-20 | RHD4CZ5C061SL3300 |
| RHD4CZ5C061SL4200 |  | Lean Concrete for Distribution Pillars for Street Lighting Network - (RD-C-6 /1)-Z5-C061-SL | 2d | 2027-01-21 | 2027-01-23 | RHD4CZ5C061SL4100 |
| RHD4CZ5C061SL4300 |  | Installation of Distribution Pillars for Street Lighting Network - (RD-C-6 /1)-Z5-C061-SL | 2d | 2027-01-31 | 2027-02-01 | RHD4CZ5C061SL4200, RHD4CZ5C061SL1400 |
|  | 4645 | **RHD4-02-002-C061-(SL)-Street Lighting Earthing System** |  | 2027-02-02 | 2027-02-03 |  |
| RHD4CZ5C061SL6100 |  | Installation of Earthing for Lighting Poles and Fedder Pillers for Street Lighting Network - (RD-C-6 /1)-Z5-C061-SL | 2d | 2027-02-02 | 2027-02-03 | RHD4CZ5C061SL4300, RHD4ENMSER2000, RHD4ENMSER2010, RHD4CZ5C061SL1500 |
|  | 4651 | **RHD4-02-002-Z5-C061-Telecommunications Network - TC** |  | 2026-08-01 | 2027-02-13 |  |
|  | 4652 | **RHD4-02-002-C061-(TC)-Telecommunications Ducts** |  | 2027-02-04 | 2027-02-13 |  |
| RHD4CZ5C061TC2100 |  | Excavation of HDPE Ducts for Telecom Network - (RD-C-6 /1)-Z5-C061-TC | 2d | 2027-02-04 | 2027-02-06 | RHD4CZ5C061TC3400, RHD4ENSDZ5APPTC190, RHD4CZ5C061SL6100 |
| RHD4CZ5C061TC2200 |  | Installation of HDPE Ducts for Telecom Network - (RD-C-6 /1)-Z5-C061-TC | 3d | 2027-02-07 | 2027-02-09 | RHD4CZ5C061TC2100, RHD4PRSHLDOSTC1000, RHD4PRSHLSTAGTC1000 |
| RHD4CZ5C061TC2400 |  | Backfilling of HDPE Ducts for Telecom Network - (RD-C-6 /1)-Z5-C061-TC | 2d | 2027-02-11 | 2027-02-13 | RHD4CZ5C061TC2200, RHD4CZ5C061TC5200 |
|  | 4653 | **RHD4-02-002-C061-(TC)-Telecommunications Manholes** |  | 2027-02-07 | 2027-02-10 |  |
| RHD4CZ5C061TC5100 |  | Excavation for Manholes for Telecom Network - (RD-C-6 /1)-Z5-C061-TC | 2d | 2027-02-07 | 2027-02-08 | RHD4CZ5C061TC2100, RHD4ENSDZ5APPTC190 |
| RHD4CZ5C061TC5200 |  | Installation of Manholes for Telecom Network - (RD-C-6 /1)-Z5-C061-TC | 2d | 2027-02-09 | 2027-02-10 | RHD4CZ5C061TC5100, RHD4CZ5C061TC2200 SS, RHD4PRSHLDOSTC1200, RHD4PRSHLSTAGTC1200 |
|  | 4654 | **RHD4-02-002-C061-(TC)-Telecomminications Road Crossings** |  | 2026-08-01 | 2026-08-09 |  |
| RHD4CZ5C061TC3100 |  | Excavation for Road Crossings for Telecom Network - (RD-C-6 /1)-Z5-C061-TC | 2d | 2026-08-01 | 2026-08-02 | RHD4ENSDZ5APPTC190, RHD4CZ5C061ST3101 |
| RHD4CZ5C061TC3200 |  | Installation of Road Crossings for Telecom Network - (RD-C-6 /1)-Z5-C061-TC | 2d | 2026-08-03 | 2026-08-04 | RHD4CZ5C061TC3100, RHD4PRSHLDOSTC1100, RHD4PRSHLSTAGTC1100 |
| RHD4CZ5C061TC3300 |  | Pouring of Road Crossings for Telecom Network - (RD-C-6 /1)-Z5-C061-TC | 2d | 2026-08-05 | 2026-08-06 | RHD4CZ5C061TC3200, RHD4CZ5L07ST3502 |
| RHD4CZ5C061TC3400 |  | Backfilling of Road Crossings for Telecom Network - (RD-C-6 /1)-Z5-C061-TC | 2d | 2026-08-08 | 2026-08-09 | RHD4CZ5C061TC3300 |
|  | 4655 | **RHD4-02-002-Z5-C061-Information and Communication Technologies - ICT** |  | 2026-08-01 | 2027-02-27 |  |
|  | 4656 | **RHD4-02-002-C061-(ICT)-Information and Communication Technologies Ducts** |  | 2027-02-10 | 2027-02-27 |  |
| RHD4CZ5C061ICT2100 |  | Excavation of HDPE Ducts for ICT Network - (RD-C-6 /1)-Z5-C061-ICT | 4d | 2027-02-10 | 2027-02-14 | RHD4ENSDZ5APPICT200, RHD4CZ5C061TC2200 |
| RHD4CZ5C061ICT2200 |  | Installation of HDPE Ducts for ICT Network - (RD-C-6 /1)-Z5-C061-ICT | 6d | 2027-02-15 | 2027-02-21 | RHD4CZ5C061ICT2100, RHD4PRSHLDOSICT1000, RHD4PRSHLSTAGICT1000 |
| RHD4CZ5C061ICT2400 |  | Backfilling of HDPE Ducts for ICT Network - (RD-C-6 /1)-Z5-C061-ICT | 4d | 2027-02-23 | 2027-02-27 | RHD4CZ5C061ICT2200, RHD4CZ5C061ICT5200, RHD4CZ5C061MV5400, RHD4CZ5C061MV3400, RHD4CZ5C061MV3401 |
|  | 4657 | **RHD4-02-002-C061-(ICT)-Information and Communication Technologies Manholes** |  | 2027-02-15 | 2027-02-21 |  |
| RHD4CZ5C061ICT5100 |  | Excavation for Manholes for ICT Network - (RD-C-6 /1)-Z5-C061-ICT | 3d | 2027-02-15 | 2027-02-17 | RHD4CZ5C061ICT2100, RHD4ENSDZ5APPICT200 |
| RHD4CZ5C061ICT5200 |  | Installation of Manholes for ICT Network - (RD-C-6 /1)-Z5-C061-ICT | 3d | 2027-02-18 | 2027-02-21 | RHD4CZ5C061ICT5100, RHD4PRSHLDOSICT1200, RHD4PRSHLSTAGICT1200 |
|  | 4658 | **RHD4-02-002-C061-(ICT)-Information and Communication Technologies Road Crossings** |  | 2026-08-01 | 2026-08-23 |  |
| RHD4CZ5C061ICT3100 |  | Excavation for Road Crossings for ICT Network - (RD-C-6 /1)-Z5-C061-ICT | 2d | 2026-08-01 | 2026-08-02 | RHD4ENSDZ5APPICT200, RHD4CZ5C061ST3101 |
| RHD4CZ5C061ICT3200 |  | Installation of Road Crossings for ICT Network - (RD-C-6 /1)-Z5-C061-ICT | 2d | 2026-08-17 | 2026-08-18 | RHD4CZ5C061ICT3100, RHD4PRSHLDOSICT1100, RHD4PRSHLSTAGICT1100 |
| RHD4CZ5C061ICT3300 |  | Pouring of Road Crossings for ICT Network - (RD-C-6 /1)-Z5-C061-ICT | 2d | 2026-08-19 | 2026-08-20 | RHD4CZ5C061ICT3200 |
| RHD4CZ5C061ICT3400 |  | Backfilling of Road Crossings for ICT Network - (RD-C-6 /1)-Z5-C061-ICT | 2d | 2026-08-22 | 2026-08-23 | RHD4CZ5C061ICT3300, RHD4CZ5C061ST2500 |
|  | 4646 | **RHD4-02-002-Z5-C061-Landscape Network - LS** |  |  |  |  |
|  | 4647 | **RHD4-02-002-C061-(LS)-Landscape Lighting cables** |  |  |  |  |
|  | 4648 | **RHD4-02-002-C061-(LS)-Landscape Feeder Pillars** |  |  |  |  |
|  | 4649 | **RHD4-02-002-C061-(LS)-Landscape Bollard Poles** |  |  |  |  |
|  | 4650 | **RHD4-02-002-C061-(LS)-Landscape Feeder Pillars Earthing** |  |  |  |  |
|  | 4659 | **RHD4-02-002-Z5-C061-Security Network - CCTV** |  | 2027-02-28 | 2027-04-03 |  |
|  | 4660 | **RHD4-02-002-C061-(CCTV)-Civil Works** |  | 2027-02-28 | 2027-03-14 |  |
| RHD4CZ5C061CCTV2100 |  | Civil Works for Security Network - (RD-C-6 /1)-Z5-C061-CCTV | 10d | 2027-02-28 | 2027-03-14 | RHD4CZ5C061ICT2400 |
|  | 4661 | **RHD4-02-002-C061-(CCTV)-CCTV Poles** |  | 2027-03-15 | 2027-03-25 |  |
| RHD4CZ5C061CCTV1100 |  | Excavation for RC Base for CCTV Poles for Security Network - (RD-C-6 /1)-Z5-C061-CCTV | 2d | 2027-03-15 | 2027-03-16 | RHD4CZ5C061CCTV2100, RHD4ENSDZ5APPCCTV210 |
| RHD4CZ5C061CCTV1200 |  | Installation for RC Base for CCTV Poles for Security Network - (RD-C-6 /1)-Z5-C061-CCTV | 2d | 2027-03-17 | 2027-03-18 | RHD4CZ5C061CCTV1100 |
| RHD4CZ5C061CCTV1300 |  | Backfill for RC Base for CCTV Poles for Security Network - (RD-C-6 /1)-Z5-C061-CCTV | 2d | 2027-03-20 | 2027-03-21 | RHD4CZ5C061CCTV1200 |
| RHD4CZ5C061CCTV1400 |  | Installation for CCTV Poles for Security Network - (RD-C-6 /1)-Z5-C061-CCTV | 2d | 2027-03-22 | 2027-03-23 | RHD4CZ5C061CCTV1300, RHD4PRSHLDOSCCTV1000, RHD4PRSHLSTACCTV1000 |
| RHD4CZ5C061CCTV1500 |  | Protection post Installation for CCTV Poles for Security Network - (RD-C-6 /1)-Z5-C061-CCTV | 2d | 2027-03-24 | 2027-03-25 | RHD4CZ5C061CCTV1400 |
|  | 4662 | **RHD4-02-002-C061-(CCTV)-Camera** |  | 2027-03-27 | 2027-03-28 |  |
| RHD4CZ5C061CCTV3100 |  | Installation for Cameras for Security Network - (RD-C-6 /1)-Z5-C061-CCTV | 2d | 2027-03-27 | 2027-03-28 | RHD4CZ5C061CCTV1400, RHD4CZ5C061CCTV4100, RHD4PRSHLDOSCCTV1100, RHD4PRSHLSTACCTV1100, RHD4CZ5C061CCTV1500 |
|  | 4663 | **RHD4-02-002-C061-(CCTV)-Power and Infrastructure** |  | 2027-03-24 | 2027-03-28 |  |
| RHD4CZ5C061CCTV4100 |  | Installation of Power outlet, UPS and midspan for PTZ Camerafor Cameras for Security Network - (RD-C-6 /1)-Z5-C061-CCTV | 2d | 2027-03-24 | 2027-03-25 | RHD4CZ5C061CCTV1400, RHD4PRSHLDOSCCTV1300, RHD4PRSHLSTACCTV1300 |

| ID | WBS | Task | Duration | Start | Finish | Predecessors |
| --- | --- | --- | --- | --- | --- | --- |
| RHD4CZ5C061CCTV4200 |  | Short Range Wireless PoP wireless Bridgefor CCTV Poles for Security Network - (RD-C-6 /1)-Z5-C061-CCTV | 2d | 2027-03-27 | 2027-03-28 | RHD4CZ5C061CCTV4100 |
|  | 4665 | **RHD4-02-002-C061-(CCTV)-CCTV Panels and Components** |  | 2027-03-29 | 2027-04-03 |  |
| RHD4CZ5C061CCTV6100 |  | Installation for CCTV Panels for Security Network - (RD-C-6 /1)-Z5-C061-CCTV | 5d | 2027-03-29 | 2027-04-03 | RHD4CZ5C061CCTV4200, RHD4CZ5C061CCTV3100, RHD4PRSHLDOSCCTV1200, RHD4PRSHLSTACCTV1200, RHD4PRLOLSTACCTV1001 |
|  | 4298 | **RHD4-02-002-Z5-L08** |  | 2026-07-28 | 2027-07-10 |  |
|  | 4329 | **RHD4-02-002-Z5-L08-Crossings Sewage Network - SWCr** |  |  |  |  |
|  | 4339 | **RHD4-02-002-L08-(SWCr)-MH Works - 1200 mm diameter** |  |  |  |  |
|  | 4340 | **RHD4-02-002-L08-(SWCr)-MH Works - 1200 mm diameter with Back drop** |  |  |  |  |
|  | 4330 | **RHD4-02-002-L08-(SWCr)-GRP Pipes - 300 mm diameter** |  |  |  |  |
|  | 4335 | **RHD4-02-002-L08-(SWCr)-UPVC Pipes - 200 mm diameter** |  |  |  |  |
|  | 4336 | **RHD4-02-002-L08-(SWCr)-HDPE Pipes - 250 mm diameter** |  |  |  |  |
|  | 4373 | **RHD4-02-002-Z5-L08-Crossings Potable Network - PTCr** |  |  |  |  |
|  | 4375 | **RHD4-02-002-L08-(PTCr)-HDPE Pipes - 160 mm diameter** |  |  |  |  |
|  | 4374 | **RHD4-02-002-L08-(PTCr)-HDPE Pipes - 110 mm diameter** |  |  |  |  |
|  | 4379 | **RHD4-02-002-L08-(PTCr)-Gate Valves (Direct Buried)** |  |  |  |  |
|  | 4420 | **RHD4-02-002-Z5-L08-Crossings Irrigation Network - IRRC** |  |  |  |  |
|  | 4421 | **RHD4-02-002-L08-(IRRC)-HDPE Pipes - 160 mm diameter** |  |  |  |  |
|  | 4429 | **RHD4-02-002-L08-(IRRC)-Gate Valves (Direct Buried)** |  |  |  |  |
|  | 4477 | **RHD4-02-002-Z5-L08-Road Works - RD** |  | 2026-08-15 | 2027-07-10 |  |
|  | 4478 | **RHD4-02-002-L08-(RD)-Subgrade** |  | 2026-08-15 | 2026-08-18 |  |
| RHD4CZ5L08RD1100 |  | Supply, lay and compaction subgrade compacted thickness 300 mm for Roads - (RD-L-8)-Z5-L08-RD(Completed) | 4d | 2026-08-15 | 2026-08-18 | RHD4ENSDZ5APPRD220, RHD4ENSDZ5APPEW100 SS, RHD4CZ5L08ST3302, RHD4CZ5L08ST3300, RHD4CZ5L08ST1509, RHD4CZ5L08TC3400 |
|  | 4479 | **RHD4-02-002-L08-(RD)-Aggregate Base Course** |  | 2026-08-19 | 2026-08-26 |  |
| RHD4CZ5L08RD2100 |  | Supply, lay and compaction Aggregate base course compacted thickness 300 mmfor Roads - (RD-L-8)-Z5-L08-RD | 7d | 2026-08-19 | 2026-08-26 | RHD4PRSHLDOSRD1000, RHD4PRSHLSTAGRD1000, RHD4ENSDZ5APPRD220, RHD4ENSDZ5APPEW100 SS, RHD4CZ5L08RD1100 |
|  | 4480 | **RHD4-02-002-L08-(RD)-Bituminous base course Two Layers, including (MC1)&(RC2)** |  | 2026-08-27 | 2027-06-06 |  |
| RHD4CZ5L08RD3100 |  | Supply, lay and Asphaltic base course including Prime Coat (MC1) for 1st Layer - (RD-L-8)-Z5-L08-RD | 2d | 2026-08-27 | 2026-08-29 | RHD4CZ5L08RD2100, RHD4PRSHLDOSRD1100, RHD4ENMSASPH2000, RHD4ENMSASPH2010, RHD4PRSHLSTAGRD1100 |
| RHD4CZ5L08RD3200 |  | Supply, lay and Asphaltic base course including Tack Coat (RC2) for 2nd Layer - (RD-L-8)-Z5-L08-RD | 2d | 2027-06-05 | 2027-06-06 | RHD4PRSHLDOSRD1100, RHD4PRSHLSTAGRD1100, RHD4CZ5L08ICT2400 |
|  | 4482 | **RHD4-02-002-L08-(RD)-Precast Concrete Curb** |  | 2027-06-07 | 2027-06-14 |  |
| RHD4CZ5L08RD5100 |  | Supply and installation Precast Concrete Kerb for Roads - (RD-L-8)-Z5-L08-RD | 7d | 2027-06-07 | 2027-06-14 | RHD4CZ5L08RD3200, RHD4PRSHLDOSRD1200, RHD4ENMSRD2000, RHD4ENMSRD2010, RHD4PRSHLSTAGRD1200 |
|  | 4485 | **RHD4-02-002-L08-(RD)-Traffic Signage** |  | 2027-06-15 | 2027-06-20 |  |
| RHD4CZ5L08RD8100 |  | Installation of Traffic Signage for Road Network - (RD-L-8)-Z5-L08-RD | 5d | 2027-06-15 | 2027-06-20 | RHD4CZ5L08RD5100, RHD4PRSHLDOSRD1600, RHD4PRSHLSTAGRD1600 |
|  | 4483 | **RHD4-02-002-L08-(RD)-Precast Interlocking Block Pavers** |  | 2027-06-21 | 2027-06-27 |  |
| RHD4CZ5L08RD6100 |  | Interlocking block pavers for sidewalk-footpath for Side walks and Parking areas - (RD-L-8)-Z5-L08-RD | 6d | 2027-06-21 | 2027-06-27 | RHD4CZ5L08RD8100, RHD4PRSHLDOSRD1300, RHD4ENMSRD2000, RHD4ENMSRD2010, RHD4PRSHLSTAGRD1300 |
|  | 4481 | **RHD4-02-002-L08-(RD)-Bituminous concrete wearing course including tack coat (RC2)** |  | 2027-06-28 | 2027-06-29 |  |
| RHD4CZ5L08RD4100 |  | Supply, lay and compaction Asphaltic wearing course including tack Coat (RC2)for Road Network - (RD-L-8)-Z5-L08-RD | 2d | 2027-06-28 | 2027-06-29 | RHD4CZ5L08RD5100, RHD4CZ5L08RD6100 |
|  | 4484 | **RHD4-02-002-L08-(RD)-Pavement Marking** |  | 2027-07-07 | 2027-07-10 |  |
| RHD4CZ5L08RD7100 |  | Pavement Markings for Road Network - (RD-L-8)-Z5-L08-RD | 3d | 2027-07-07 | 2027-07-10 | RHD4PRSHLDOSRD1500, RHD4PRSHLSTAGRD1500, RHD4CZ6C062RD7100 |
|  | 4302 | **RHD4-02-002-Z5-L08-Storm Network - ST** |  | 2026-07-28 | 2026-08-30 |  |
|  | 4321 | **RHD4-02-002-L08-(ST)-MH Works - 2000 mm diameter** |  | 2026-07-28 | 2026-08-16 |  |
| RHD4CZ5L08ST3102 |  | Excavation and PC Blinding works for MH 2000 mm - (RD-L-8)-Z5-L08-ST | 3d | 2026-07-28 | 2026-07-30 | RHD4ENSDZ5APPST110, RHD4ENMSST2000, RHD4CZ5C051ST3101 |
| RHD4CZ5L08ST3202 |  | Installation of Base for MH 2000 mm - (RD-L-8)-Z5-L08-ST | 4d | 2026-08-01 | 2026-08-04 | RHD4CZ5L08ST3102, RHD4PRSHLSTAGST1604 |
| RHD4CZ5L08ST3302 |  | MH Ring and C.Slab works and Backfilling works for MH 2000 mm - (RD-L-8)-Z5-L08-ST | 4d | 2026-08-05 | 2026-08-09 | RHD4CZ5L08ST3202, RHD4PRSHLDOSST1604 |
| RHD4CZ5L08ST3402 |  | Steel Cover for MH 2000 mm - (RD-L-8)-Z5-L08-ST | 3d | 2026-08-10 | 2026-08-12 | RHD4PRSHLDOSST1704, RHD4PRSHLSTAGST1704, RHD4CZ5L08ST3302 |
| RHD4CZ5L08ST3502 |  | Finishing, Benching, Testing works for MH 2000 mm - (RD-L-8)-Z5-L08-ST | 3d | 2026-08-13 | 2026-08-16 | RHD4CZ5L08ST3402 |
|  | 4319 | **RHD4-02-002-L08-(ST)-MH Works - 1200 mm diameter** |  | 2026-08-01 | 2026-08-17 |  |
| RHD4CZ5L08ST3100 |  | Excavation and PC Blinding works for MH 1200 mm - (RD-L-8)-Z5-L08-ST | 2d | 2026-08-01 | 2026-08-02 | RHD4CZ5L08ST3102, RHD4ENSDZ5APPST110, RHD4ENMSST2000, RHD4ENMSST2010 |
| RHD4CZ5L08ST3200 |  | Installation of Base for MH 1200 mm - (RD-L-8)-Z5-L08-ST | 2d | 2026-08-03 | 2026-08-04 | RHD4CZ5L08ST3100, RHD4PRSHLSTAGST1604 |
| RHD4CZ5L08ST3300 |  | MH Ring and C.Slab works and Backfilling works for MH 1200 mm - (RD-L-8)-Z5-L08-ST | 2d | 2026-08-05 | 2026-08-06 | RHD4CZ5L08ST3200, RHD4PRSHLDOSST1604 |
| RHD4CZ5L08ST3400 |  | Steel Cover for MH 1200 mm - (RD-L-8)-Z5-L08-ST | 2d | 2026-08-13 | 2026-08-15 | RHD4CZ5L08ST3300, RHD4PRSHLDOSST1704, RHD4PRSHLSTAGST1704, RHD4CZ5L08ST3402 |
| RHD4CZ5L08ST3500 |  | Finishing, Benching, Testing works for MH 1200 mm - (RD-L-8)-Z5-L08-ST | 2d | 2026-08-16 | 2026-08-17 | RHD4CZ5L08ST3400 |
|  | 4316 | **RHD4-02-002-L08-(ST)-GRP Pipes - 1800 mm diameter** |  |  |  |  |
|  | 6393 | **RHD4-02-002-L08-(ST)-GRP Pipes - 1300 mm diameter** |  | 2026-08-03 | 2026-08-13 |  |
| RHD4CZ5L08ST1109 |  | Excavation works for GRP Pipe Line 1300 mm - (RD-L-8)-Z5-L08-ST | 2d | 2026-08-03 | 2026-08-04 | RHD4CZ5L08ST3100 |
| RHD4CZ5L08ST1209 |  | Bedding works for GRP Pipe Line 1300 mm - (RD-L-8)-Z5-L08-ST | 2d | 2026-08-05 | 2026-08-06 | RHD4CZ5L08ST1109 |
| RHD4CZ5L08ST1309 |  | Installing for GRP Pipe Line 1300 mm - (RD-L-8)-Z5-L08-ST | 2d | 2026-08-08 | 2026-08-09 | RHD4CZ5L08ST1209 |
| RHD4CZ5L08ST1409 |  | Primary Test for GRP Pipe Line 1300 mm - (RD-L-8)-Z5-L08-ST | 2d | 2026-08-10 | 2026-08-11 | RHD4CZ5L08ST1309 |
| RHD4CZ5L08ST1509 |  | Backfilling and warning tape works for GRP Pipe Line 1300 mm - (RD-L-8)-Z5-L08-ST | 2d | 2026-08-12 | 2026-08-13 | RHD4CZ5L08ST1409 |
|  | 2414 | **RHD4-02-002-L08-(ST)-GRP Pipes - 600 mm diameter** |  | 2026-08-03 | 2026-08-13 |  |
| RHD4CZ5L08ST1102 |  | Excavation works for GRP Pipe Line 600 mm - (RD-L-8)-Z5-L08-ST | 2d | 2026-08-03 | 2026-08-04 | RHD4CZ5L08ST3100 |
| RHD4CZ5L08ST1202 |  | Bedding works for GRP Pipe Line 600 mm - (RD-L-8)-Z5-L08-ST | 2d | 2026-08-05 | 2026-08-06 | RHD4CZ5L08ST1102 |
| RHD4CZ5L08ST1302 |  | Installing for GRP Pipe Line 600 mm - (RD-L-8)-Z5-L08-ST | 2d | 2026-08-08 | 2026-08-09 | RHD4CZ5L08ST1202 |
| RHD4CZ5L08ST1402 |  | Primary Test for GRP Pipe Line 600 mm - (RD-L-8)-Z5-L08-ST | 2d | 2026-08-10 | 2026-08-11 | RHD4CZ5L08ST1302 |
| RHD4CZ5L08ST1502 |  | Backfilling and warning tape works for GRP Pipe Line 600 mm - (RD-L-8)-Z5-L08-ST | 2d | 2026-08-12 | 2026-08-13 | RHD4CZ5L08ST1402 |
|  | 4304 | **RHD4-02-002-L08-(ST)-GRP Pipes - 500 mm diameter** |  | 2026-08-05 | 2026-08-16 |  |
| RHD4CZ5L08ST1101 |  | Excavation works for GRP Pipe Line 500 mm - (RD-L-8)-Z5-L08-ST | 2d | 2026-08-05 | 2026-08-06 | RHD4ENSDZ5APPST110, RHD4CZ5L08ST1102 |
| RHD4CZ5L08ST1201 |  | Bedding works for GRP Pipe Line 500 mm - (RD-L-8)-Z5-L08-ST | 2d | 2026-08-08 | 2026-08-09 | RHD4CZ5L08ST1101 |
| RHD4CZ5L08ST1301 |  | Installing for GRP Pipe Line 500 mm - (RD-L-8)-Z5-L08-ST | 2d | 2026-08-10 | 2026-08-11 | RHD4CZ5L08ST1201, RHD4PRSHLSTAGST1004, RHD4PRSHLDOSST1604, RHD4PRSHLPOST1000, RHD4PRSHLDOSST1004 |
| RHD4CZ5L08ST1401 |  | Primary Test for GRP Pipe Line 500 mm - (RD-L-8)-Z5-L08-ST | 2d | 2026-08-12 | 2026-08-13 | RHD4CZ5L08ST1301 |
| RHD4CZ5L08ST1501 |  | Backfilling and warning tape works for GRP Pipe Line 500 mm - (RD-L-8)-Z5-L08-ST | 2d | 2026-08-15 | 2026-08-16 | RHD4CZ5L08ST1401 |
|  | 4303 | **RHD4-02-002-L08-(ST)-GRP Pipes - 400 mm diameter** |  | 2026-08-08 | 2026-08-18 |  |
| RHD4CZ5L08ST1100 |  | Excavation works for GRP Pipe Line 400 mm - (RD-L-8)-Z5-L08-ST | 2d | 2026-08-08 | 2026-08-09 | RHD4CZ5L08ST1101, RHD4ENSDZ5APPST110 |
| RHD4CZ5L08ST1200 |  | Bedding works for GRP Pipe Line 400 mm - (RD-L-8)-Z5-L08-ST | 2d | 2026-08-10 | 2026-08-11 | RHD4CZ5L08ST1100 |

| ID | WBS | Task | Duration | Start | Finish | Predecessors |
| --- | --- | --- | --- | --- | --- | --- |
| RHD4CZ5L08ST1300 |  | Installing for GRP Pipe Line 400 mm - (RD-L-8)-Z5-L08-ST | 2d | 2026-08-12 | 2026-08-13 | RHD4CZ5L08ST1200, RHD4CZ5L08ST1301, RHD4PRSHLSTAGST1004, RHD4PRSHLDOSST1604, RHD4PRSHLPOST1000, RHD4PRSHLDOSST1004 |
| RHD4CZ5L08ST1400 |  | Primary Test for GRP Pipe Line 400 mm - (RD-L-8)-Z5-L08-ST | 2d | 2026-08-15 | 2026-08-16 | RHD4CZ5L08ST1300 |
| RHD4CZ5L08ST1500 |  | Backfilling and warning tape works for GRP Pipe Line 400 mm - (RD-L-8)-Z5-L08-ST | 2d | 2026-08-17 | 2026-08-18 | RHD4CZ5L08ST1400, RHD4CZ5L08ST1501 |
|  | 4317 | **RHD4-02-002-L08-(ST)-UPVC Pipes - 300 mm diameter** |  | 2026-08-18 | 2026-08-30 |  |
| RHD4CZ5L08ST2100 |  | Excavation works for UPVC Pipe Line 300 mm - (RD-L-8)-Z5-L08-ST | 2d | 2026-08-18 | 2026-08-19 | RHD4CZ5L08ST3300, RHD4CZ5L08ST3202, RHD4CZ5L08ST7300, RHD4CZ5L08ST3302, RHD4ENSDZ5APPST110 |
| RHD4CZ5L08ST2200 |  | Bedding works for UPVC Pipe Line 300 mm - (RD-L-8)-Z5-L08-ST | 2d | 2026-08-20 | 2026-08-22 | RHD4CZ5L08ST2100 |
| RHD4CZ5L08ST2300 |  | Installing for UPVC Pipe Line 300 mm - (RD-L-8)-Z5-L08-ST | 2d | 2026-08-23 | 2026-08-24 | RHD4CZ5L08ST2200, RHD4PRSHLDOSST1104, RHD4PRSHLSTAGST1104 |
| RHD4CZ5L08ST2400 |  | Primary Test for UPVC Pipe Line 300 mm - (RD-L-8)-Z5-L08-ST | 2d | 2026-08-25 | 2026-08-26 | RHD4CZ5L08ST2300 |
| RHD4CZ5L08ST2500 |  | Backfilling and warning tape works for UPVC Pipe Line 300 mm - (RD-L-8)-Z5-L08-ST | 3d | 2026-08-27 | 2026-08-30 | RHD4CZ5L08ST2400, RHD4CZ5L08ST6100, RHD4CZ5L08ST1500, RHD4CZ5L08ST1509, RHD4CZ5L08ST1502 |
|  | 4325 | **RHD4-02-002-L08-(ST)-Concrete Encasement** |  | 2026-08-23 | 2026-08-24 |  |
| RHD4CZ5L08ST6100 |  | Pipe Encasement for Storm Pipelines - (RD-L-8)-Z5-L08-ST | 2d | 2026-08-23 | 2026-08-24 | RHD4CZ5L08ST2300 SS, RHD4CZ5L08ST2300 FF, RHD4CZ5L08ST2200, RHD4CZ5L08ST3500 |
|  | 4326 | **RHD4-02-002-Z5-L08-Catch Basin - ST** |  | 2026-08-08 | 2026-08-26 |  |
|  | 4327 | **RHD4-02-002-L08-(ST)-Single Catch Basin Works** |  | 2026-08-08 | 2026-08-26 |  |
| RHD4CZ5L08ST7100 |  | Excavation works for Single Catch Basin - (RD-L-8)-Z5-L08-ST | 3d | 2026-08-08 | 2026-08-10 | RHD4CZ5L08ST3300, RHD4ENSDZ5APPST110 |
| RHD4CZ5L08ST7200 |  | PC Blinding, Installation and Pipe connection for Single Catch Basin - (RD-L-8)-Z5-L08-ST | 3d | 2026-08-11 | 2026-08-13 | RHD4CZ5L08ST7100 |
| RHD4CZ5L08ST7300 |  | Rings & C.Slab & Final Backfill for Single Catch Basin - (RD-L-8)-Z5-L08-ST | 3d | 2026-08-15 | 2026-08-17 | RHD4CZ5L08ST7200, RHD4PRSHLDOSST1304, RHD4PRSHLSTAGST1304 |
| RHD4CZ5L08ST7400 |  | Steel Cover for Single Catch Basin - (RD-L-8)-Z5-L08-ST | 3d | 2026-08-18 | 2026-08-20 | RHD4CZ5L08ST7300, RHD4PRSHLDOSST1704 |
| RHD4CZ5L08ST7500 |  | Finishing and Insulation works for Single Catch Basin - (RD-L-8)-Z5-L08-ST | 5d | 2026-08-22 | 2026-08-26 | RHD4CZ5L08ST7400 |
|  | 4299 | **RHD4-02-002-Z5-L08-Concrete Box Culvert - ST** |  | 2026-08-01 | 2026-10-12 |  |
|  | 4300 | **RHD4-02-002-L08-(ST)-Concrete Box Culvert** |  | 2026-08-01 | 2026-10-12 |  |
| RHD4CZ5L08ST4100 |  | Excavation works for Box Culvert - (RD-L-8)-Z5-L08-ST(Completed) | 46d | 2026-08-01 | 2026-09-22 | RHD4ENSDZ5APPST110, RHD4CZ5L08ST3102, RHD4CZ7RA05RA3000 |
| RHD4CZ5L08ST4200 |  | PC works for Box Culvert - (RD-L-8)-Z5-L08-ST(Completed) | 43d | 2026-08-01 | 2026-09-19 | RHD4CZ5L08ST4100 SS |
| RHD4CZ5L08ST4400 |  | Raft works for Box Culvert - (RD-L-8)-Z5-L08-ST(Completed) | 21d | 2026-08-01 | 2026-08-24 | RHD4CZ5L08ST4200 SS |
| RHD4CZ5L08ST4500 |  | Wall and slab works for Box Culvert - (RD-L-8)-Z5-L08-ST | 2d | 2026-09-24 | 2026-09-26 | RHD4CZ5L08ST4400, RHD4CZ5L08ST4200, RHD4ENMSBC2000, RHD4ENMSBC2010, RHD4ENSDZ5APPST110, RHD4CZ5L08ST4100, RHD4CZ1C081ST3500, RHD4CZ2C082ST8500, RHD4CZ6C052SW3500, RHD4CZ9L05MV3300 |
| RHD4CZ5L08ST4700 |  | Backfilling works for Box Culvert - (RD-L-8)-Z5-L08-ST | 3d | 2026-10-07 | 2026-10-10 | RHD4CZ5L08ST4500, RHD4CZ5L08ST5300 |
| RHD4CZ5L08ST4600 |  | Insulation and Testing for Box Culvert - (RD-L-8)-Z5-L08-ST | 2d | 2026-10-11 | 2026-10-12 | RHD4CZ5L08ST4700, RHD4CZ5L08ST5400 |
|  | 4301 | **RHD4-02-002-L08-(ST)-Concrete Chambers** |  | 2026-09-27 | 2026-10-10 |  |
| RHD4CZ5L08ST5100 |  | Excavation and Bedding for Concrete Chambers - for Box Culvert - (RD-L-8)-Z5-L08-ST | 3d | 2026-09-27 | 2026-09-29 | RHD4CZ5L08ST4500, RHD4ENSDZ5APPST110, RHD4CZ5L08RD3100 |
| RHD4CZ5L08ST5200 |  | PC works for Concrete Chambers - for Box Culvert - (RD-L-8)-Z5-L08-ST | 3d | 2026-09-30 | 2026-10-03 | RHD4CZ5L08ST5100, RHD4CZ5L08ST7500 |
| RHD4CZ5L08ST5300 |  | Installation for Concrete Chambers - for Box Culvert - (RD-L-8)-Z5-L08-ST | 3d | 2026-10-04 | 2026-10-06 | RHD4CZ5L08ST5200 |
| RHD4CZ5L08ST5400 |  | Backfilling works for Concrete Chambers - for Box Culvert - (RD-L-8)-Z5-L08-ST | 3d | 2026-10-07 | 2026-10-10 | RHD4CZ5L08ST5300 |
|  | 4351 | **RHD4-02-002-Z5-L08-Sewage Network - SW** |  | 2026-10-13 | 2026-12-10 |  |
|  | 957 | **RHD4-02-002-L08-(SW)-MH Works - 1200 mm diameter with Back drop** |  | 2026-10-13 | 2026-11-10 |  |
| RHD4CZ5L08SW3101 |  | Excavation and PC Blinding works for MH 1200 mm - (RD-L-8)-Z5-L08-SW | 4d | 2026-10-13 | 2026-10-17 | RHD4CZ5L08SW3100 SS, RHD4CZ5L08ST2500 |
| RHD4CZ5L08SW3201 |  | Installation of Base for MH 1200 mm - (RD-L-8)-Z5-L08-SW | 6d | 2026-10-18 | 2026-10-24 | RHD4CZ5L08SW3101 |
| RHD4CZ5L08SW3301 |  | MH Ring and C.Slab works and Backfilling works for MH 1200 mm - (RD-L-8)-Z5-L08-SW | 6d | 2026-10-25 | 2026-10-31 | RHD4CZ5L08SW3201 |
| RHD4CZ5L08SW3401 |  | Steel Cover for MH 1200 mm - (RD-L-8)-Z5-L08-SW | 3d | 2026-11-01 | 2026-11-03 | RHD4CZ5L08SW3301 |
| RHD4CZ5L08SW3501 |  | Finishing, Benching, Testing works for MH 1200 mm - (RD-L-8)-Z5-L08-SW | 6d | 2026-11-04 | 2026-11-10 | RHD4CZ5L08SW3401 |
|  | 4361 | **RHD4-02-002-L08-(SW)-MH Works - 1200 mm diameter** |  | 2026-10-13 | 2026-11-30 |  |
| RHD4CZ5L08SW3100 |  | Excavation and PC Blinding works for MH 1200 mm - (RD-L-8)-Z5-L08-SW | 7d | 2026-10-13 | 2026-10-20 | RHD4ENSDZ5APPSW120, RHD4CZ5L08ST4600, RHD4CZ5L08ST1102 |
| RHD4CZ5L08SW3200 |  | Installation of Base for MH 1200 mm - (RD-L-8)-Z5-L08-SW | 10d | 2026-10-21 | 2026-11-01 | RHD4CZ5L08SW3100 |
| RHD4CZ5L08SW3300 |  | MH Ring and C.Slab works and Backfilling works for MH 1200 mm - (RD-L-8)-Z5-L08-SW | 10d | 2026-11-02 | 2026-11-12 | RHD4CZ5L08SW3200, RHD4CZ8A011ST1201, RHD4CZ5L07SL2400 |
| RHD4CZ5L08SW3400 |  | Steel Cover for MH 1200 mm - (RD-L-8)-Z5-L08-SW | 5d | 2026-11-14 | 2026-11-18 | RHD4CZ5L08SW3300 |
| RHD4CZ5L08SW3500 |  | Finishing, Benching, Testing works for MH 1200 mm - (RD-L-8)-Z5-L08-SW | 10d | 2026-11-19 | 2026-11-30 | RHD4CZ5L08SW3400 |
|  | 4352 | **RHD4-02-002-L08-(SW)-GRP Pipes - 300 mm diameter** |  | 2026-11-02 | 2026-11-30 |  |
| RHD4CZ5L08SW1100 |  | Excavation works for GRP Pipe Line 300 mm - (RD-L-8)-Z5-L08-SW | 5d | 2026-11-02 | 2026-11-07 | RHD4CZ5L08SW3200, RHD4ENSDZ5APPSW120 |
| RHD4CZ5L08SW1200 |  | Bedding works for GRP Pipe Line 300 mm - (RD-L-8)-Z5-L08-SW | 5d | 2026-11-08 | 2026-11-12 | RHD4CZ5L08SW1100 |
| RHD4CZ5L08SW1300 |  | Installing for GRP Pipe Line 300 mm - (RD-L-8)-Z5-L08-SW | 5d | 2026-11-14 | 2026-11-18 | RHD4CZ5L08SW1200, RHD4CZ5L08SW3300 |
| RHD4CZ5L08SW1400 |  | Primary Test for GRP Pipe Line 300 mm - (RD-L-8)-Z5-L08-SW | 5d | 2026-11-19 | 2026-11-24 | RHD4CZ5L08SW1300 |
| RHD4CZ5L08SW1500 |  | Backfilling and warning tape works for GRP Pipe Line 300 mm - (RD-L-8)-Z5-L08-SW | 5d | 2026-11-25 | 2026-11-30 | RHD4CZ5L08SW1400 |
|  | 4357 | **RHD4-02-002-L08-(SW)-UPVC Pipes - 200 mm diameter** |  | 2026-11-08 | 2026-12-02 |  |
| RHD4CZ5L08SW2100 |  | Excavation works for UPVC Pipe Line 200 mm - (RD-L-8)-Z5-L08-SW | 2d | 2026-11-08 | 2026-11-09 | RHD4CZ5L08SW1100, RHD4ENSDZ5APPSW120 |
| RHD4CZ5L08SW2200 |  | Bedding works for UPVC Pipe Line 200 mm - (RD-L-8)-Z5-L08-SW | 2d | 2026-11-14 | 2026-11-15 | RHD4CZ5L08SW2100, RHD4CZ5L08SW1200 |
| RHD4CZ5L08SW2300 |  | Installing for UPVC Pipe Line 200 mm - (RD-L-8)-Z5-L08-SW | 2d | 2026-11-19 | 2026-11-21 | RHD4CZ5L08SW2200, RHD4CZ5L08SW1300 |
| RHD4CZ5L08SW2400 |  | Primary Test for UPVC Pipe Line 200 mm - (RD-L-8)-Z5-L08-SW | 2d | 2026-11-25 | 2026-11-26 | RHD4CZ5L08SW2300, RHD4CZ5L08SW1400 |
| RHD4CZ5L08SW2500 |  | Backfilling and warning tape works for UPVC Pipe Line 200 mm - (RD-L-8)-Z5-L08-SW | 2d | 2026-12-01 | 2026-12-02 | RHD4CZ5L08SW2400, RHD4CZ5L08SW1500 |
|  | 4358 | **RHD4-02-002-L08-(SW)-HDPE Pipes - 250 mm diameter** |  | 2026-11-02 | 2026-11-29 |  |
| RHD4CZ5L08SW2600 |  | Excavation works for HDPE Force Main Pipeline 250 mm - (RD-L-8)-Z5-L08-SW | 3d | 2026-11-02 | 2026-11-04 | RHD4CZ5L08SW1100 SS, RHD4ENSDZ5APPSW120 |
| RHD4CZ5L08SW2700 |  | Bedding works for HDPE Force Main Pipeline 250 mm - (RD-L-8)-Z5-L08-SW | 3d | 2026-11-08 | 2026-11-10 | RHD4CZ5L08SW2600, RHD4CZ5L08SW1200 SS |
| RHD4CZ5L08SW2800 |  | Installing for HDPE Force Main Pipeline 250 mm - (RD-L-8)-Z5-L08-SW | 5d | 2026-11-14 | 2026-11-18 | RHD4CZ5L08SW2700, RHD4CZ5L08SW1300 SS |
| RHD4CZ5L08SW2900 |  | Primary Test for HDPE Force Main Pipeline 250 mm - (RD-L-8)-Z5-L08-SW | 2d | 2026-11-19 | 2026-11-21 | RHD4CZ5L08SW2800, RHD4CZ5L08SW1400 SS |
| RHD4CZ5L08SW3000 |  | Backfilling and warning tape works for HDPE Force Main Pipeline 250 mm - (RD-L-8)-Z5-L08-SW | 4d | 2026-11-25 | 2026-11-29 | RHD4CZ5L08SW2900, RHD4CZ5L08SW1500 SS |
|  | 4360 | **RHD4-02-002-L08-(SW)-Concrete Encasement** |  | 2026-11-19 | 2026-12-10 |  |
| RHD4CZ5L08SW6100 |  | Pipe Encasement for Sewage Pipelines - (RD-L-8)-Z5-L08-SW | 19d | 2026-11-19 | 2026-12-10 | RHD4CZ5L08SW1300 FF, RHD4CZ5L08SW2300 FF, RHD4CZ5L08SW1300 SS, RHD4CZ5L08SW2300 SS, RHD4CZ5L08SW1200, RHD4CZ5L08SW2200, RHD4CZ5L08SW3501, RHD4CZ5L08ST2500 |
|  | 4388 | **RHD4-02-002-Z5-L08-Potable Network - PT** |  | 2026-11-14 | 2026-12-16 |  |
|  | 4389 | **RHD4-02-002-L08-(PT)-HDPE Pipes - 110 mm diameter** |  | 2026-11-14 | 2026-11-24 |  |
| RHD4CZ5L08PT1100 |  | Excavation works for HDPE Pipline 110 mm - (RD-L-8)-Z5-L08-PT | 2d | 2026-11-14 | 2026-11-15 | RHD4ENSDZ5APPPT130, RHD4ENMSPT2000, RHD4CZ5L08SW3300 |
| RHD4CZ5L08PT1200 |  | Bedding works for HDPE Pipline 110 mm - (RD-L-8)-Z5-L08-PT | 2d | 2026-11-16 | 2026-11-17 | RHD4CZ5L08PT1100, RHD4CZ4C031ST8500 |
| RHD4CZ5L08PT1300 |  | Installing for HDPE Pipline 110 mm - (RD-L-8)-Z5-L08-PT | 2d | 2026-11-18 | 2026-11-19 | RHD4CZ5L08PT1200, RHD4PRSHLDOSPT1000, RHD4PRSHLSTAGPT1000 |
| RHD4CZ5L08PT1400 |  | Primary Test for HDPE Pipline 110 mm - (RD-L-8)-Z5-L08-PT | 2d | 2026-11-21 | 2026-11-22 | RHD4CZ5L08PT1300 |

| ID | WBS | Task | Duration | Start | Finish | Predecessors |
| --- | --- | --- | --- | --- | --- | --- |
| RHD4CZ5L08PT1500 |  | Backfilling and warning tape works for HDPE Pipline 110 mm - (RD-L-8)-Z5-L08-PT | 2d | 2026-11-23 | 2026-11-24 | RHD4CZ5L08PT1400 |
|  | 4390 | **RHD4-02-002-L08-(PT)-HDPE Pipes - 160 mm diameter** |  | 2026-11-16 | 2026-12-07 |  |
| RHD4CZ5L08PT1101 |  | Excavation works for HDPE Pipline 160 mm - (RD-L-8)-Z5-L08-PT | 4d | 2026-11-16 | 2026-11-19 | RHD4ENSDZ5APPPT130, RHD4ENMSPT2000, RHD4CZ5L08PT1100 |
| RHD4CZ5L08PT1201 |  | Bedding works for HDPE Pipline 160 mm - (RD-L-8)-Z5-L08-PT | 3d | 2026-11-21 | 2026-11-23 | RHD4CZ5L08PT1101 |
| RHD4CZ5L08PT1301 |  | Installing for HDPE Pipline 160 mm - (RD-L-8)-Z5-L08-PT | 6d | 2026-11-24 | 2026-11-30 | RHD4CZ5L08PT1201, RHD4PRSHLDOSPT1000, RHD4PRSHLSTAGPT1000 |
| RHD4CZ5L08PT1401 |  | Primary Test for HDPE Pipline 160 mm - (RD-L-8)-Z5-L08-PT | 2d | 2026-12-01 | 2026-12-02 | RHD4CZ5L08PT1301, RHD4CZ5L08PT5100, RHD4CZ5L08PT3100 |
| RHD4CZ5L08PT1501 |  | Backfilling and warning tape works for HDPE Pipline 160 mm - (RD-L-8)-Z5-L08-PT | 4d | 2026-12-03 | 2026-12-07 | RHD4CZ5L08PT1401 |
|  | 4394 | **RHD4-02-002-L08-(PT)-Gate Valves (Direct Buried)** |  | 2026-11-24 | 2026-11-30 |  |
| RHD4CZ5L08PT3100 |  | Installation for Direct Buried Gate Valves - (RD-L-8)-Z5-L08-PT | 3d | 2026-11-24 | 2026-11-26 | RHD4CZ5L08PT1300 FF, RHD4CZ5L08PT1301 SS, RHD4CZ5L08PT1300 SS, RHD4PRSHLDOSPT1200, RHD4PRSHLSTAGPT1200 |
| RHD4CZ5L08PT3200 |  | Stem and Service box for Direct Buried Gate Valves - (RD-L-8)-Z5-L08-PT | 3d | 2026-11-28 | 2026-11-30 | RHD4CZ5L08PT3100 |
|  | 4399 | **RHD4-02-002-L08-(PT)-Air Valve Chambers** |  | 2026-11-21 | 2026-11-29 |  |
| RHD4CZ5L08PT2102 |  | Excavation and Bedding for Air Valve Chambers for Potable Water Network - (RD-L-8)-Z5-L08-PT | 2d | 2026-11-21 | 2026-11-22 | RHD4ENSDZ5APPPT130, RHD4CZ5L08PT1101 |
| RHD4CZ5L08PT2202 |  | PC works for Air Valve Chambers for Potable Water Network - (RD-L-8)-Z5-L08-PT | 2d | 2026-11-23 | 2026-11-24 | RHD4CZ5L08PT2102 |
| RHD4CZ5L08PT2302 |  | Installation for Air Valve Chambers for Potable Water Network - (RD-L-8)-Z5-L08-PT | 2d | 2026-11-25 | 2026-11-26 | RHD4CZ5L08PT2202 |
| RHD4CZ5L08PT2402 |  | Backfilling works for Air Valve Chambers for Potable Water Network - (RD-L-8)-Z5-L08-PT | 2d | 2026-11-28 | 2026-11-29 | RHD4CZ5L08PT2302 |
|  | 4400 | **RHD4-02-002-L08-(PT)-Air Valves** |  | 2026-11-28 | 2026-12-01 |  |
| RHD4CZ5L08PT3103 |  | Installation for Air Valves for Potable Water Network - (RD-L-8)-Z5-L08-PT | 2d | 2026-11-28 | 2026-11-29 | RHD4CZ5L08PT2302, RHD4PRSHLDOSPT1200, RHD4PRSHLSTAGPT1200 |
| RHD4CZ5L08PT3203 |  | Stem and Service box for Air Valves for Potable Water Network - (RD-L-8)-Z5-L08-PT | 2d | 2026-11-30 | 2026-12-01 | RHD4CZ5L08PT3103, RHD4CZ5L08PT2402 |
|  | 4401 | **RHD4-02-002-L08-(PT)-Fire Hydrant** |  | 2026-11-25 | 2026-12-16 |  |
| RHD4CZ5L08PT4100 |  | Excavation and Bedding and Pipe Installation for Fire Hydrant - (RD-L-8)-Z5-L08-PT | 5d | 2026-11-25 | 2026-11-30 | RHD4CZ5L08PT1500, RHD4ENSDZ5APPPT130 |
| RHD4CZ5L08PT4200 |  | Valve Installation for Fire Hydrant - (RD-L-8)-Z5-L08-PT | 4d | 2026-12-01 | 2026-12-05 | RHD4CZ5L08PT4100, RHD4CZ5L07PT3202, RHD4CZ5L07PT3203, RHD4CZ5L08SW3000, RHD4CZ2C082PT3203 |
| RHD4CZ5L08PT4300 |  | Stem for Fire Hydrant - (RD-L-8)-Z5-L08-PT | 4d | 2026-12-06 | 2026-12-09 | RHD4CZ5L08PT4200 |
| RHD4CZ5L08PT4400 |  | Fire Installation for Fire Hydrant - (RD-L-8)-Z5-L08-PT | 4d | 2026-12-10 | 2026-12-14 | RHD4CZ5L08PT4300, RHD4PRSHLDOSPT1500, RHD4PRSHLSTAGPT1500, RHD4CZ5RA07PT4500, RHD4CZ5RA07PT3203, RHD4CZ5RA07PT3202, RHD4CZ5RA07IRR3202, RHD4CZ2C082IRR3200 |
| RHD4CZ5L08PT4500 |  | Protection Barriers for Fire Hydrant - (RD-L-8)-Z5-L08-PT | 2d | 2026-12-15 | 2026-12-16 | RHD4CZ5L08PT4400 |
|  | 4402 | **RHD4-02-002-L08-(PT)-Concrete Encasement** |  | 2026-11-29 | 2026-11-30 |  |
| RHD4CZ5L08PT5100 |  | Pipe Encasement for Potable Pipelines - (RD-L-8)-Z5-L08-PT | 2d | 2026-11-29 | 2026-11-30 | RHD4CZ5L08PT1301 FF, RHD4CZ5L08PT1300 FF, RHD4CZ5L08PT1301 SS, RHD4CZ5L08PT1300 SS, RHD4CZ5L08PT1200, RHD4CZ5L08PT1201 |
|  | 4403 | **RHD4-02-002-Z5-L08-Irrigation Network - IRR** |  | 2026-11-25 | 2027-01-04 |  |
|  | 4404 | **RHD4-02-002-L08-(IRR)-HDPE Pipes - 160 mm diameter** |  | 2026-12-17 | 2026-12-28 |  |
| RHD4CZ5L08IRR1100 |  | Excavation works for HDPE Pipline 160 mm - (RD-L-8)-Z5-L08-IRR | 2d | 2026-12-17 | 2026-12-19 | RHD4CZ5L08PT1101, RHD4ENSDZ5APPIRR140, RHD4ENMSRR2000, RHD4CZ5L08PT1500, RHD4CZ5L08PT4500 |
| RHD4CZ5L08IRR1200 |  | Bedding works for HDPE Pipline 160 mm - (RD-L-8)-Z5-L08-IRR | 2d | 2026-12-20 | 2026-12-21 | RHD4CZ5L08IRR1100 |
| RHD4CZ5L08IRR1300 |  | Installing for HDPE Pipline 160 mm - (RD-L-8)-Z5-L08-IRR | 2d | 2026-12-22 | 2026-12-23 | RHD4CZ5L08IRR1200, RHD4PRSHLDOSIRR1000, RHD4PRSHLSTAGIRR1000 |
| RHD4CZ5L08IRR1400 |  | Primary Test for HDPE Pipline 160 mm - (RD-L-8)-Z5-L08-IRR | 2d | 2026-12-24 | 2026-12-26 | RHD4CZ5L08IRR1300 |
| RHD4CZ5L08IRR1500 |  | Backfilling and warning tape works for HDPE Pipline 160 mm - (RD-L-8)-Z5-L08-IRR | 2d | 2026-12-27 | 2026-12-28 | RHD4CZ5L08IRR1400 |
|  | 4412 | **RHD4-02-002-L08-(IRR)-Gate Valves (Direct Buried)** |  | 2026-12-22 | 2026-12-30 |  |
| RHD4CZ5L08IRR3100 |  | Installation for Direct Buried Gate Valves - (RD-L-8)-Z5-L08-IRR | 2d | 2026-12-22 | 2026-12-23 | RHD4CZ5L08IRR1302 SS, RHD4CZ5L08IRR1302 FF, RHD4CZ5L08IRR1300 SS, RHD4CZ5L08IRR1300 FF, RHD4PRSHLDOSIRR1100, RHD4PRSHLSTAGIRR1100 |
| RHD4CZ5L08IRR3200 |  | Stem and Service box for Direct Buried Gate Valves - (RD-L-8)-Z5-L08-IRR | 2d | 2026-12-29 | 2026-12-30 | RHD4CZ5L08IRR3100, RHD4CZ5L08IRR1500, RHD4PRSHLDOSIRR1300, RHD4PRSHLSTAGIRR1300 |
|  | 6685 | **RHD4-02-002-L08-(IRR)-Wash out Chamber** |  | 2026-12-24 | 2027-01-02 |  |
| RHD4CZ5L08IRR2101 |  | Excavation and Bedding for Wash out Chamber for Irrigation Network - (RD-L-8)-Z5-L08-IRR | 2d | 2026-12-24 | 2026-12-26 | RHD4CZ5L08IRR3100 |
| RHD4CZ5L08IRR2201 |  | PC works for Wash out Chamber for Irrigation Network - (RD-L-8)-Z5-L08-IRR | 2d | 2026-12-27 | 2026-12-28 | RHD4CZ5L08IRR2101 |
| RHD4CZ5L08IRR2301 |  | Installation for Wash out Chamber for Irrigation Network - (RD-L-8)-Z5-L08-IRR | 2d | 2026-12-29 | 2026-12-30 | RHD4CZ5L08IRR2201 |
| RHD4CZ5L08IRR2401 |  | Backfilling works for Wash out Chamber for Irrigation Network - (RD-L-8)-Z5-L08-IRR | 2d | 2026-12-31 | 2027-01-02 | RHD4CZ5L08IRR2301 |
|  | 6686 | **RHD4-02-002-L08-(IRR)-Wash out Valves** |  | 2026-12-31 | 2027-01-04 |  |
| RHD4CZ5L08IRR3102 |  | Installation for Wash out Valve for Irrigation Network - (RD-L-8)-Z5-L08-IRR | 2d | 2026-12-31 | 2027-01-02 | RHD4CZ5L08IRR3100, RHD4CZ5L08IRR2301 |
| RHD4CZ5L08IRR3202 |  | Stem and Service box for Wash out Valve for Irrigation Network - (RD-L-8)-Z5-L08-IRR | 2d | 2027-01-03 | 2027-01-04 | RHD4CZ5L08IRR3102, RHD4CZ5L08IRR2401 |
|  | 4406 | **RHD4-02-002-L08-(IRR)-HDPE Pipes - 200 mm diameter** |  | 2026-11-25 | 2026-12-30 |  |
| RHD4CZ5L08IRR1102 |  | Excavation works for HDPE Pipline 200 mm - (RD-L-8)-Z5-L08-IRR | 5d | 2026-11-25 | 2026-11-30 | RHD4CZ5L08PT1101, RHD4CZ5L08PT1100, RHD4ENSDZ5APPIRR140, RHD4ENMSRR2000, RHD4CZ5L08PT1500, RHD4CZ5C061MV2400 |
| RHD4CZ5L08IRR1202 |  | Bedding works for HDPE Pipline 200 mm - (RD-L-8)-Z5-L08-IRR | 4d | 2026-12-01 | 2026-12-05 | RHD4CZ5L08IRR1102 |
| RHD4CZ5L08IRR1302 |  | Installing for HDPE Pipline 200 mm - (RD-L-8)-Z5-L08-IRR | 5d | 2026-12-06 | 2026-12-10 | RHD4CZ5L08IRR1202, RHD4PRSHLDOSIRR1000, RHD4PRSHLSTAGIRR1000 |
| RHD4CZ5L08IRR1402 |  | Primary Test for HDPE Pipline 200 mm - (RD-L-8)-Z5-L08-IRR | 2d | 2026-12-24 | 2026-12-26 | RHD4CZ5L08IRR1302, RHD4CZ5L08IRR3100 |
| RHD4CZ5L08IRR1502 |  | Backfilling and warning tape works for HDPE Pipline 200 mm - (RD-L-8)-Z5-L08-IRR | 4d | 2026-12-27 | 2026-12-30 | RHD4CZ5L08IRR1402 |
|  | 4437 | **RHD4-02-002-Z5-L08-Medium Voltage Network - MV** |  | 2027-01-31 | 2027-04-15 |  |
|  | 4438 | **RHD4-02-002-L08-(MV)-Medium Voltage cable trench** |  | 2027-01-31 | 2027-04-06 |  |
| RHD4CZ5L08MV1100 |  | Excavation for Medium Voltage Trench - (RD-L-8)-Z5-L08-MV | 15d | 2027-01-31 | 2027-02-16 | RHD4ENSDZ5APPMV150, RHD4CZ5L08RD3100, RHD4CZ5C061MV1100 |
| RHD4CZ5L08MV1200 |  | Trench Backfilling for Medium Voltage Network - (RD-L-8)-Z5-L08-MV | 14d | 2027-03-22 | 2027-04-06 | RHD4CZ5L08MV1100, RHD4CZ5L08MV3300 |
|  | 4439 | **RHD4-02-002-L08-(MV)-Medium Voltage duct banks** |  | 2027-04-07 | 2027-04-15 |  |
| RHD4CZ5L08MV2100 |  | Excavation of Duct Banks for Medium Voltage Network - (RD-L-8)-Z5-L08-MV | 2d | 2027-04-07 | 2027-04-08 | RHD4ENSDZ5APPMV150, RHD4CZ5L08MV1200 |
| RHD4CZ5L08MV2200 |  | Installation of Duct Banks for Medium Voltage Network - (RD-L-8)-Z5-L08-MV | 2d | 2027-04-10 | 2027-04-11 | RHD4CZ5L08MV2100 |
| RHD4CZ5L08MV2300 |  | Pouring of Duct Banks for Medium Voltage Network - (RD-L-8)-Z5-L08-MV | 2d | 2027-04-12 | 2027-04-13 | RHD4CZ5L08MV2200 |
| RHD4CZ5L08MV2400 |  | Backfilling of Duct Banks for Medium Voltage Network - (RD-L-8)-Z5-L08-MV | 2d | 2027-04-14 | 2027-04-15 | RHD4CZ5L08MV2300 |
|  | 4440 | **RHD4-02-002-L08-(MV)-Medium Voltage cables 3Cx 500 mm²** |  | 2027-02-17 | 2027-03-23 |  |
| RHD4CZ5L08MV3100 |  | Installation of Medium Voltage Cables 3Cx 500 mm² - (RD-L-8)-Z5-L08-MV | 16d | 2027-02-17 | 2027-03-08 | RHD4CZ5L08MV1100, RHD4ENMSMV2000, RHD4ENMSMV2010 |
| RHD4CZ5L08MV3200 |  | Joints Installation of Medium Voltage Cables 3Cx 500 mm² - (RD-L-8)-Z5-L08-MV | 3d | 2027-03-13 | 2027-03-15 | RHD4PRSHLDOSMV1300, RHD4CZ5L08MV3100 |
| RHD4CZ5L08MV3300 |  | Testing of Medium Voltage Cables 3Cx 500 mm² - (RD-L-8)-Z5-L08-MV | 5d | 2027-03-16 | 2027-03-21 | RHD4CZ5L08MV3200 |
| RHD4CZ5L08MV3400 |  | Termination of Medium Voltage Cables 3Cx 500 mm² - (RD-L-8)-Z5-L08-MV | 2d | 2027-03-22 | 2027-03-23 | RHD4CZ5L08MV3300 |
|  | 4441 | **RHD4-02-002-L08-(MV)-Medium Voltage cables 3Cx 50 mm²** |  | 2027-03-24 | 2027-03-25 |  |
| RHD4CZ5L08MV3401 |  | Termination of Medium Voltage Cables 3Cx 50 mm² - (RD-L-8)-Z5-L08-MV | 2d | 2027-03-24 | 2027-03-25 | RHD4CZ5L08MV3400 |
|  | 4442 | **RHD4-02-002-L08-(MV)-Normally open Point (Outdoor Type)** |  | 2027-03-07 | 2027-03-14 |  |
| RHD4CZ5L08MV4100 |  | Installation for Normally open Point - (RD-L-8)-Z5-L08-MV | 2d | 2027-03-07 | 2027-03-08 | RHD4CZ5L08MV3100 FF, RHD4PRSHLDOSMV1400, RHD4PRSHLSTAGMV1400 |
| RHD4CZ5L08MV4200 |  | Termination for Normally open Point - (RD-L-8)-Z5-L08-MV | 2d | 2027-03-13 | 2027-03-14 | RHD4CZ5L08MV4100 |
|  | 4444 | **RHD4-02-002-Z5-L08-Low Voltage Network - LV** |  | 2027-01-05 | 2027-01-18 |  |

| ID | WBS | Task | Duration | Start | Finish | Predecessors |
| --- | --- | --- | --- | --- | --- | --- |
|  | 4445 | **RHD4-02-002-L08-(LV)-Low Voltage duct banks** |  |  |  |  |
|  | 4257 | **RHD4-02-002-L08-(LV)-Low Voltage Drawpit** |  |  |  |  |
|  | 4447 | **RHD4-02-002-L08-(LV)-Low Voltage cables** |  | 2027-01-05 | 2027-01-18 |  |
| RHD4CZ5L08LV3100 |  | Excavation for Low Voltage Cables for Low Voltage Network - (RD-L-8)-Z5-L08-LV | 4d | 2027-01-05 | 2027-01-09 | RHD4ENSDZ5APPLV160, RHD4CZ5L08IRR3202 |
| RHD4CZ5L08LV3200 |  | Cable Laying of Low Voltage Cables for Low Voltage Network - (RD-L-8)-Z5-L08-LV | 3d | 2027-01-10 | 2027-01-12 | RHD4CZ5L08LV3100, RHD4PRSHLDOSLV1100, RHD4ENMSLV2000, RHD4ENMSLV2010, RHD4PRSHLSTAGLV1100 |
| RHD4CZ5L08LV3300 |  | Warning tape and Backfill for Low Voltage Cables for Low Voltage Network - (RD-L-8)-Z5-L08-LV | 3d | 2027-01-13 | 2027-01-16 | RHD4CZ5L08LV3200 |
| RHD4CZ5L08LV3400 |  | Testing of Low Voltage Cables for Low Voltage Network - (RD-L-8)-Z5-L08-LV | 2d | 2027-01-17 | 2027-01-18 | RHD4CZ5L08LV3300 |
|  | 4259 | **RHD4-02-002-L08-(LV)-Low Voltage Distribution Pillars** |  | 2027-01-10 | 2027-01-16 |  |
| RHD4CZ5L08LV4100 |  | Leveling for Distribution Pillars for Low Voltage Network - (RD-L-8)-Z5-L08-LV | 2d | 2027-01-10 | 2027-01-11 | RHD4CZ5L08LV3100 |
| RHD4CZ5L08LV4200 |  | Lean Concrete for Distribution Pillars for Low Voltage Network - (RD-L-8)-Z5-L08-LV | 2d | 2027-01-12 | 2027-01-13 | RHD4CZ5L08LV4100 |
| RHD4CZ5L08LV4300 |  | Installation of Distribution Pillars for Low Voltage Network - (RD-L-8)-Z5-L08-LV | 2d | 2027-01-14 | 2027-01-16 | RHD4CZ5L08LV4200 |
|  | 4450 | **RHD4-02-002-Z5-L08-Street Lighting Network - SL** |  | 2027-01-10 | 2027-03-20 |  |
|  | 4451 | **RHD4-02-002-L08-(SL)-Street Lighting duct banks** |  | 2027-01-10 | 2027-01-18 |  |
| RHD4CZ5L08SL2100 |  | Excavation of Duct Banks for Street Lighting Network - (RD-L-8)-Z5-L08-SL | 2d | 2027-01-10 | 2027-01-11 | RHD4ENSDZ5APPSL170, RHD4CZ5L08LV3100 |
| RHD4CZ5L08SL2200 |  | Installation of Duct Banks for Street Lighting Network - (RD-L-8)-Z5-L08-SL | 2d | 2027-01-12 | 2027-01-13 | RHD4CZ5L08SL2100 |
| RHD4CZ5L08SL2300 |  | Pouring of Duct Banks for Street Lighting Network - (RD-L-8)-Z5-L08-SL | 2d | 2027-01-14 | 2027-01-16 | RHD4CZ5L08SL2200 |
| RHD4CZ5L08SL2400 |  | Backfilling of Duct Banks for Street Lighting Network - (RD-L-8)-Z5-L08-SL | 2d | 2027-01-17 | 2027-01-18 | RHD4CZ5L08SL2300 |
|  | 4452 | **RHD4-02-002-L08-(SL)-Street Lighting Drawpit** |  | 2027-01-19 | 2027-01-23 |  |
| RHD4CZ5L08SL5100 |  | Excavation of Drawpit size 600x600x900mm for Street Lighting Network - (RD-L-8)-Z5-L08-SL | 2d | 2027-01-19 | 2027-01-20 | RHD4CZ5L08SL2300, RHD4ENSDZ5APPSL170, RHD4CZ5L08LV3400, RHD4CZ5L08LV4300, RHD4CZ5L08SL2400 |
| RHD4CZ5L08SL5200 |  | Installation of Drawpit size 600x600x900mm for Street Lighting Network - (RD-L-8)-Z5-L08-SL | 2d | 2027-01-21 | 2027-01-23 | RHD4CZ5L08SL5100, RHD4PRSHLDOSSL1400, RHD4PRSHLSTAGSL1400 |
|  | 4453 | **RHD4-02-002-L08-(SL)-Street Lighting cables** |  | 2027-01-24 | 2027-02-18 |  |
| RHD4CZ5L08SL3100 |  | Excavation for Street Lighting Cables for Street Lighting Network - (RD-L-8)-Z5-L08-SL | 7d | 2027-01-24 | 2027-01-31 | RHD4ENSDZ5APPSL170, RHD4CZ5L08SL5200 |
| RHD4CZ5L08SL3200 |  | Cable Laying of Street Lighting Cables for Street Lighting Network - (RD-L-8)-Z5-L08-SL | 6d | 2027-02-01 | 2027-02-07 | RHD4CZ5L08SL3100, RHD4ENMSSL2000, RHD4ENMSSL2010 |
| RHD4CZ5L08SL3300 |  | Warning tape and Backfill for Street Lighting Cables for Street Lighting Network - (RD-L-8)-Z5-L08-SL | 6d | 2027-02-08 | 2027-02-14 | RHD4CZ5L08SL3200 |
| RHD4CZ5L08SL3400 |  | Testing of Street Lighting Cables for Street Lighting Network - (RD-L-8)-Z5-L08-SL | 4d | 2027-02-15 | 2027-02-18 | RHD4CZ5L08SL3300 |
|  | 4454 | **RHD4-02-002-L08-(SL)-Street Lighting Poles** |  | 2027-02-20 | 2027-03-20 |  |
| RHD4CZ5L08SL1100 |  | Excavation for RC Base for Lighting Poles for Street Lighting Network - (RD-L-8)-Z5-L08-SL | 4d | 2027-02-20 | 2027-02-24 | RHD4ENSDZ5APPSL170, RHD4CZ5L08SL3400 |
| RHD4CZ5L08SL1200 |  | Installation for RC Base for Lighting Poles for Street Lighting Network - (RD-L-8)-Z5-L08-SL | 4d | 2027-02-25 | 2027-03-01 | RHD4CZ5L08SL1100 |
| RHD4CZ5L08SL1300 |  | Backfill for RC Base for Lighting Poles for Street Lighting Network - (RD-L-8)-Z5-L08-SL | 4d | 2027-03-02 | 2027-03-06 | RHD4CZ5L08SL1200 |
| RHD4CZ5L08SL1400 |  | Installation for Lighting Poles for Street Lighting Network - (RD-L-8)-Z5-L08-SL | 5d | 2027-03-07 | 2027-03-15 | RHD4CZ5L08SL1300, RHD4ENMSSL2000, RHD4ENMSSL2010 |
| RHD4CZ5L08SL1500 |  | Luminaire Installation for Lighting Poles for Street Lighting Network - (RD-L-8)-Z5-L08-SL | 4d | 2027-03-16 | 2027-03-20 | RHD4CZ5L08SL1400, RHD4PRSHLDOSSL1300, RHD4PRSHLSTAGSL1300 |
|  | 4462 | **RHD4-02-002-Z5-L08-Telecommunications Network - TC** |  | 2026-08-01 | 2027-04-26 |  |
|  | 4463 | **RHD4-02-002-L08-(TC)-Telecommunications Ducts** |  | 2027-03-21 | 2027-04-26 |  |
| RHD4CZ5L08TC2100 |  | Excavation of HDPE Ducts for Telecom Network - (RD-L-8)-Z5-L08-TC | 9d | 2027-03-21 | 2027-03-30 | RHD4CZ5L08TC3400, RHD4ENSDZ5APPTC190, RHD4CZ5L08SL1500 |
| RHD4CZ5L08TC2200 |  | Installation of HDPE Ducts for Telecom Network - (RD-L-8)-Z5-L08-TC | 14d | 2027-03-31 | 2027-04-15 | RHD4CZ5L08TC2100, RHD4PRSHLDOSTC1000, RHD4PRSHLSTAGTC1000 |
| RHD4CZ5L08TC2400 |  | Backfilling of HDPE Ducts for Telecom Network - (RD-L-8)-Z5-L08-TC | 9d | 2027-04-17 | 2027-04-26 | RHD4CZ5L08TC2200, RHD4CZ5L08TC5200, RHD4CZ5L08TC5200 FF |
|  | 4464 | **RHD4-02-002-L08-(TC)-Telecommunications Manholes** |  | 2027-03-31 | 2027-04-11 |  |
| RHD4CZ5L08TC5100 |  | Excavation for Manholes for Telecom Network - (RD-L-8)-Z5-L08-TC | 5d | 2027-03-31 | 2027-04-05 | RHD4CZ5L08TC2100, RHD4ENSDZ5APPTC190 |
| RHD4CZ5L08TC5200 |  | Installation of Manholes for Telecom Network - (RD-L-8)-Z5-L08-TC | 5d | 2027-04-06 | 2027-04-11 | RHD4CZ5L08TC5100, RHD4CZ5L08TC2200 SS, RHD4PRSHLDOSTC1200, RHD4PRSHLSTAGTC1200 |
|  | 4465 | **RHD4-02-002-L08-(TC)-Telecomminications Road Crossings** |  | 2026-08-01 | 2026-08-09 |  |
| RHD4CZ5L08TC3100 |  | Excavation for Road Crossings for Telecom Network - (RD-L-8)-Z5-L08-TC | 2d | 2026-08-01 | 2026-08-02 | RHD4ENSDZ5APPTC190, RHD4CZ5L08ST3102 |
| RHD4CZ5L08TC3200 |  | Installation of Road Crossings for Telecom Network - (RD-L-8)-Z5-L08-TC | 2d | 2026-08-03 | 2026-08-04 | RHD4CZ5L08TC3100, RHD4PRSHLDOSTC1100, RHD4PRSHLSTAGTC1100 |
| RHD4CZ5L08TC3300 |  | Pouring of Road Crossings for Telecom Network - (RD-L-8)-Z5-L08-TC | 2d | 2026-08-05 | 2026-08-06 | RHD4CZ5L08TC3200 |
| RHD4CZ5L08TC3400 |  | Backfilling of Road Crossings for Telecom Network - (RD-L-8)-Z5-L08-TC | 2d | 2026-08-08 | 2026-08-09 | RHD4CZ5L08TC3300, RHD4CZ6A02ST7500 |
|  | 4466 | **RHD4-02-002-Z5-L08-Information and Communication Technologies - ICT** |  | 2027-04-27 | 2027-06-03 |  |
|  | 4467 | **RHD4-02-002-L08-(ICT)-Information and Communication Technologies Ducts** |  | 2027-04-27 | 2027-06-03 |  |
| RHD4CZ5L08ICT2100 |  | Excavation of HDPE Ducts for ICT Network - (RD-L-8)-Z5-L08-ICT | 10d | 2027-04-27 | 2027-05-08 | RHD4ENSDZ5APPICT200, RHD4CZ5L08TC2400 |
| RHD4CZ5L08ICT2200 |  | Installation of HDPE Ducts for ICT Network - (RD-L-8)-Z5-L08-ICT | 9d | 2027-05-09 | 2027-05-23 | RHD4CZ5L08ICT2100, RHD4PRSHLDOSICT1000, RHD4PRSHLSTAGICT1000 |
| RHD4CZ5L08ICT2400 |  | Backfilling of HDPE Ducts for ICT Network - (RD-L-8)-Z5-L08-ICT | 10d | 2027-05-24 | 2027-06-03 | RHD4CZ5L08ICT2200, RHD4CZ5L08ICT5200 |
|  | 4468 | **RHD4-02-002-L08-(ICT)-Information and Communication Technologies Manholes** |  | 2027-05-09 | 2027-05-23 |  |
| RHD4CZ5L08ICT5100 |  | Excavation for Manholes for ICT Network - (RD-L-8)-Z5-L08-ICT | 4d | 2027-05-09 | 2027-05-12 | RHD4CZ5L08ICT2100, RHD4ENSDZ5APPICT200 |
| RHD4CZ5L08ICT5200 |  | Installation of Manholes for ICT Network - (RD-L-8)-Z5-L08-ICT | 5d | 2027-05-13 | 2027-05-23 | RHD4CZ5L08ICT5100, RHD4CZ5L08ICT2200 SS, RHD4PRSHLDOSICT1200, RHD4PRSHLSTAGICT1200 |
|  | 5415 | **RHD4-02-002-L08-(ICT)-Information and Communication Technologies Road Crossings** |  |  |  |  |
|  | 4457 | **RHD4-02-002-Z5-L08-Landscape Network - LS** |  |  |  |  |
|  | 4458 | **RHD4-02-002-L08-(LS)-Landscape Lighting cables** |  |  |  |  |
|  | 4459 | **RHD4-02-002-L08-(LS)-Landscape Feeder Pillars** |  |  |  |  |
|  | 4460 | **RHD4-02-002-L08-(LS)-Landscape Bollard Poles** |  |  |  |  |
|  | 4461 | **RHD4-02-002-L08-(LS)-Landscape Feeder Pillars Earthing** |  |  |  |  |
|  | 4470 | **RHD4-02-002-Z5-L08-Security Network - CCTV** |  |  |  |  |
|  | 4471 | **RHD4-02-002-L08-(CCTV)-Civil Works** |  |  |  |  |
|  | 4851 | **RHD4-02-002-L08-(CCTV)-CCTV Poles** |  |  |  |  |
|  | 4852 | **RHD4-02-002-L08-(CCTV)-Camera** |  |  |  |  |
|  | 4853 | **RHD4-02-002-L08-(CCTV)-Power and Infrastructure** |  |  |  |  |
|  | 4855 | **RHD4-02-002-L08-(CCTV)-CCTV Panels and Components** |  |  |  |  |
|  | 3731 | **RHD4-02-002-Z5-L016** |  | 2026-06-13 | 2027-09-13 |  |
|  | 3762 | **RHD4-02-002-Z5-L016-Crossings Sewage Network - SWCr** |  |  |  |  |
|  | 3772 | **RHD4-02-002-L016-(SWCr)-MH Works - 1200 mm diameter** |  |  |  |  |
|  | 3763 | **RHD4-02-002-L016-(SWCr)-GRP Pipes - 300 mm diameter** |  |  |  |  |
|  | 3768 | **RHD4-02-002-L016-(SWCr)-UPVC Pipes - 200 mm diameter** |  |  |  |  |
|  | 3769 | **RHD4-02-002-L016-(SWCr)-HDPE Pipes - 250 mm diameter** |  |  |  |  |

| ID | WBS | Task | Duration | Start | Finish | Predecessors |
| --- | --- | --- | --- | --- | --- | --- |
|  | 3783 | **RHD4-02-002-L016-(SWCr)-Gate Valves (Direct Buried)** |  |  |  |  |
|  | 3806 | **RHD4-02-002-Z5-L016-Crossings Potable Network - PTCr** |  |  |  |  |
|  | 3809 | **RHD4-02-002-L016-(PTCr)-HDPE Pipes - 200 mm diameter** |  |  |  |  |
|  | 3808 | **RHD4-02-002-L016-(PTCr)-HDPE Pipes - 160 mm diameter** |  |  |  |  |
|  | 3807 | **RHD4-02-002-L016-(PTCr)-HDPE Pipes - 110 mm diameter** |  |  |  |  |
|  | 3812 | **RHD4-02-002-L016-(PTCr)-Gate Valves (Direct Buried)** |  |  |  |  |
|  | 3853 | **RHD4-02-002-Z5-L016-Crossings Irrigation Network - IRRC** |  |  |  |  |
|  | 3854 | **RHD4-02-002-L016-(IRRC)-HDPE Pipes - 160 mm diameter** |  |  |  |  |
|  | 3856 | **RHD4-02-002-L016-(IRRC)-HDPE Pipes - 200 mm diameter** |  |  |  |  |
|  | 3858 | **RHD4-02-002-L016-(IRRC)-HDPE Pipes - 315 mm diameter** |  |  |  |  |
|  | 3862 | **RHD4-02-002-L016-(IRRC)-Gate Valves (Direct Buried)** |  |  |  |  |
|  | 3863 | **RHD4-02-002-L016-(IRRC)-Butterfly Valve Chamber** |  |  |  |  |
|  | 3864 | **RHD4-02-002-L016-(IRRC)-Butterfly Valves** |  |  |  |  |
|  | 3867 | **RHD4-02-002-L016-(IRRC)-Air Valve Chamber** |  |  |  |  |
|  | 3868 | **RHD4-02-002-L016-(IRRC)-Air Valves** |  |  |  |  |
|  | 3910 | **RHD4-02-002-Z5-L016-Road Works - RD** |  | 2026-08-24 | 2027-09-13 |  |
|  | 3911 | **RHD4-02-002-L016-(RD)-Subgrade** |  | 2026-08-24 | 2026-08-31 |  |
| RHD4CZ5L016RD1100 |  | Supply, lay and compaction subgrade compacted thickness 300 mm for Roads - (RD-L-16)-Z5-L016-RD(Completed) | 7d | 2026-08-24 | 2026-08-31 | RHD4ENSDZ5APPRD220, RHD4ENSDZ5APPEW100 SS, RHD4CZ5L016ST3302, RHD4CZ5L016ST1508, RHD4CZ5L016ICT3400, RHD4CZ5L016TC3400 |
|  | 3912 | **RHD4-02-002-L016-(RD)-Aggregate Base Course** |  | 2026-09-01 | 2026-09-06 |  |
| RHD4CZ5L016RD2100 |  | Supply, lay and compaction Aggregate base course compacted thickness 300 mmfor Roads - (RD-L-16)-Z5-L016-RD | 5d | 2026-09-01 | 2026-09-06 | RHD4PRSHLDOSRD1000, RHD4PRSHLSTAGRD1000, RHD4ENSDZ5APPRD220, RHD4ENSDZ5APPEW100 SS, RHD4CZ5L016RD1100 |
|  | 3913 | **RHD4-02-002-L016-(RD)-Bituminous base course Two Layers, including (MC1)&(RC2)** |  | 2026-09-07 | 2027-08-22 |  |
| RHD4CZ5L016RD3100 |  | Supply, lay and Asphaltic base course including Prime Coat (MC1) for 1st Layer - (RD-L-16)-Z5-L016-RD | 2d | 2026-09-07 | 2026-09-08 | RHD4CZ5L016RD2100, RHD4PRSHLDOSRD1100, RHD4ENMSASPH2000, RHD4ENMSASPH2010, RHD4PRSHLSTAGRD1100 |
| RHD4CZ5L016RD3200 |  | Supply, lay and Asphaltic base course including Tack Coat (RC2) for 2nd Layer - (RD-L-16)-Z5-L016-RD | 2d | 2027-08-21 | 2027-08-22 | RHD4PRSHLDOSRD1100, RHD4PRSHLSTAGRD1100, RHD4CZ5L016CCTV6100 |
|  | 3915 | **RHD4-02-002-L016-(RD)-Precast Concrete Curb** |  | 2027-08-23 | 2027-08-26 |  |
| RHD4CZ5L016RD5100 |  | Supply and installation Precast Concrete Kerb for Roads - (RD-L-16)-Z5-L016-RD | 4d | 2027-08-23 | 2027-08-26 | RHD4CZ5L016RD3200, RHD4PRSHLDOSRD1200, RHD4ENMSRD2000, RHD4ENMSRD2010, RHD4PRSHLSTAGRD1200, RHD4CZ5L08RD5100 |
|  | 3918 | **RHD4-02-002-L016-(RD)-Traffic Signage** |  | 2027-08-28 | 2027-08-31 |  |
| RHD4CZ5L016RD8100 |  | Installation of Traffic Signage for Road Network - (RD-L-16)-Z5-L016-RD | 4d | 2027-08-28 | 2027-08-31 | RHD4CZ5L016RD5100, RHD4PRSHLDOSRD1600, RHD4PRSHLSTAGRD1600, RHD4CZ5L08RD8100 |
|  | 3916 | **RHD4-02-002-L016-(RD)-Precast Interlocking Block Pavers** |  | 2027-09-01 | 2027-09-05 |  |
| RHD4CZ5L016RD6100 |  | Interlocking block pavers for sidewalk-footpath for Side walks and Parking areas - (RD-L-16)-Z5-L016-RD | 4d | 2027-09-01 | 2027-09-05 | RHD4CZ5L016RD8100, RHD4PRSHLDOSRD1300, RHD4PRSHLDOSRD1400, RHD4ENMSRD2000, RHD4ENMSRD2010, RHD4PRSHLSTAGRD1300, RHD4PRSHLSTAGRD1400 |
|  | 3914 | **RHD4-02-002-L016-(RD)-Bituminous concrete wearing course including tack coat (RC2)** |  | 2027-09-06 | 2027-09-07 |  |
| RHD4CZ5L016RD4100 |  | Supply, lay and compaction Asphaltic wearing course including tack Coat (RC2)for Road Network - (RD-L-16)-Z5-L016-RD | 2d | 2027-09-06 | 2027-09-07 | RHD4CZ5L016RD5100, RHD4CZ5L016RD6100 |
|  | 3917 | **RHD4-02-002-L016-(RD)-Pavement Marking** |  | 2027-09-08 | 2027-09-13 |  |
| RHD4CZ5L016RD7100 |  | Pavement Markings for Road Network - (RD-L-16)-Z5-L016-RD | 5d | 2027-09-08 | 2027-09-13 | RHD4CZ5L016RD4100, RHD4PRSHLDOSRD1500, RHD4PRSHLSTAGRD1500 |
|  | 3735 | **RHD4-02-002-Z5-L016-Storm Network - ST** |  | 2026-07-28 | 2026-08-22 |  |
|  | 3754 | **RHD4-02-002-L016-(ST)-MH Works - 2000 mm diameter** |  | 2026-07-28 | 2026-08-08 |  |
| RHD4CZ5L016ST3102 |  | Excavation and PC Blinding works for MH 2000 mm - (RD-L-16)-Z5-L016-ST | 2d | 2026-07-28 | 2026-07-29 | RHD4ENSDZ5APPST110, RHD4ENMSST2000, RHD4ENSDZ5APPRD220, RHD4ENSDZ5APPEW100 SS, RHD4CZ5C051ST3101 |
| RHD4CZ5L016ST3202 |  | Installation of Base for MH 2000 mm - (RD-L-16)-Z5-L016-ST | 2d | 2026-07-30 | 2026-08-01 | RHD4CZ5L016ST3102 |
| RHD4CZ5L016ST3302 |  | MH Ring and C.Slab works and Backfilling works for MH 2000 mm - (RD-L-16)-Z5-L016-ST | 2d | 2026-08-02 | 2026-08-03 | RHD4CZ5L016ST3202, RHD4PRSHLDOSST1604 |
| RHD4CZ5L016ST3402 |  | Steel Cover for MH 2000 mm - (RD-L-16)-Z5-L016-ST | 2d | 2026-08-04 | 2026-08-05 | RHD4CZ5L016ST3302 |
| RHD4CZ5L016ST3502 |  | Finishing, Benching, Testing works for MH 2000 mm - (RD-L-16)-Z5-L016-ST | 2d | 2026-08-06 | 2026-08-08 | RHD4CZ5L016ST3402 |
|  | 1852 | **RHD4-02-002-L016-(ST)-GRP Pipes - 1200 mm diameter** |  | 2026-07-30 | 2026-08-10 |  |
| RHD4CZ5L016ST1108 |  | Excavation works for GRP Pipe Line 1200 mm - (RD-L-16)-Z5-L016-ST | 2d | 2026-07-30 | 2026-08-01 | RHD4CZ5A014ST8400, RHD4CZ5L016ST3102 |
| RHD4CZ5L016ST1208 |  | Bedding works for GRP Pipe Line 1200 mm - (RD-L-16)-Z5-L016-ST | 2d | 2026-08-02 | 2026-08-03 | RHD4CZ6C062ST1506, RHD4CZ6A015PT1504, RHD4CZ5L07ST3500, RHD4CZ5L016ST1108 |
| RHD4CZ5L016ST1308 |  | Installing for GRP Pipe Line 1200 mm - (RD-L-16)-Z5-L016-ST | 2d | 2026-08-04 | 2026-08-05 | RHD4CZ5L016ST1208 |
| RHD4CZ5L016ST1408 |  | Primary Test for GRP Pipe Line 1200 mm - (RD-L-16)-Z5-L016-ST | 2d | 2026-08-06 | 2026-08-08 | RHD4CZ6A02ST3500, RHD4PRSHLSTAGTC1000, RHD4CZ5L016ST1308 |
| RHD4CZ5L016ST1508 |  | Backfilling and warning tape works for GRP Pipe Line 1200 mm - (RD-L-16)-Z5-L016-ST | 2d | 2026-08-09 | 2026-08-10 | RHD4CZ5L016ST1408 |
|  | 3749 | **RHD4-02-002-L016-(ST)-GRP Pipes - 1800 mm diameter** |  |  |  |  |
|  | 1844 | **RHD4-02-002-L016-(ST)-GRP Pipes - 400 mm diameter** |  | 2026-08-06 | 2026-08-17 |  |
| RHD4CZ5L016ST1100 |  | Excavation works for GRP Pipe Line 400 mm - (RD-L-16)-Z5-L016-ST | 2d | 2026-08-06 | 2026-08-08 | RHD4CZ5L016ST1104 FF, RHD4CZ5L016ST1104 |
| RHD4CZ5L016ST1200 |  | Bedding works for GRP Pipe Line 400 mm - (RD-L-16)-Z5-L016-ST | 2d | 2026-08-09 | 2026-08-10 | RHD4CZ5L016ST1100, RHD4CZ5L016ST1204 |
| RHD4CZ5L016ST1300 |  | Installing for GRP Pipe Line 400 mm - (RD-L-16)-Z5-L016-ST | 2d | 2026-08-11 | 2026-08-12 | RHD4CZ5L016ST1200, RHD4CZ5L016ST1304 |
| RHD4CZ5L016ST1400 |  | Primary Test for GRP Pipe Line 400 mm - (RD-L-16)-Z5-L016-ST | 2d | 2026-08-13 | 2026-08-15 | RHD4CZ5L016ST1300, RHD4CZ5L016ST1404 |
| RHD4CZ5L016ST1500 |  | Backfilling and warning tape works for GRP Pipe Line 400 mm - (RD-L-16)-Z5-L016-ST | 2d | 2026-08-16 | 2026-08-17 | RHD4CZ5L016ST1400, RHD4CZ5L016ST1504 |
|  | 1848 | **RHD4-02-002-L016-(ST)-GRP Pipes - 800 mm diameter** |  | 2026-08-04 | 2026-08-15 |  |
| RHD4CZ5L016ST1104 |  | Excavation works for GRP Pipe Line 800 mm - (RD-L-16)-Z5-L016-ST | 2d | 2026-08-04 | 2026-08-05 | RHD4CZ5L016ST1106 |
| RHD4CZ5L016ST1204 |  | Bedding works for GRP Pipe Line 800 mm - (RD-L-16)-Z5-L016-ST | 2d | 2026-08-06 | 2026-08-08 | RHD4CZ5L016ST1104 |
| RHD4CZ5L016ST1304 |  | Installing for GRP Pipe Line 800 mm - (RD-L-16)-Z5-L016-ST | 2d | 2026-08-09 | 2026-08-10 | RHD4CZ5L016ST1204 |
| RHD4CZ5L016ST1404 |  | Primary Test for GRP Pipe Line 800 mm - (RD-L-16)-Z5-L016-ST | 2d | 2026-08-11 | 2026-08-12 | RHD4CZ5L016ST1304 |
| RHD4CZ5L016ST1504 |  | Backfilling and warning tape works for GRP Pipe Line 800 mm - (RD-L-16)-Z5-L016-ST | 2d | 2026-08-13 | 2026-08-15 | RHD4CZ5L016ST1506, RHD4CZ5L016ST1404 |
|  | 2039 | **RHD4-02-002-L016-(ST)-GRP Pipes - 1000 mm diameter** |  | 2026-08-02 | 2026-08-12 |  |
| RHD4CZ5L016ST1106 |  | Excavation works for GRP Pipe Line 1000 mm - (RD-L-16)-Z5-L016-ST | 2d | 2026-08-02 | 2026-08-03 | RHD4CZ5L016ST1108 |
| RHD4CZ5L016ST1206 |  | Bedding works for GRP Pipe Line 1000 mm - (RD-L-16)-Z5-L016-ST | 2d | 2026-08-04 | 2026-08-05 | RHD4CZ5L016ST1106 |
| RHD4CZ5L016ST1306 |  | Installing for GRP Pipe Line 1000 mm - (RD-L-16)-Z5-L016-ST | 2d | 2026-08-06 | 2026-08-08 | RHD4CZ5L016ST1206 |
| RHD4CZ5L016ST1406 |  | Primary Test for GRP Pipe Line 1000 mm - (RD-L-16)-Z5-L016-ST | 2d | 2026-08-09 | 2026-08-10 | RHD4CZ5L016ST1306 |
| RHD4CZ5L016ST1506 |  | Backfilling and warning tape works for GRP Pipe Line 1000 mm - (RD-L-16)-Z5-L016-ST | 2d | 2026-08-11 | 2026-08-12 | RHD4CZ5L016ST1508, RHD4CZ5L016ST1406 |
|  | 2414 | **RHD4-02-002-L016-(ST)-GRP Pipes - 600 mm diameter** |  | 2026-08-09 | 2026-08-19 |  |
| RHD4CZ5L016ST1102 |  | Excavation works for GRP Pipe Line 600 mm - (RD-L-16)-Z5-L016-ST | 2d | 2026-08-09 | 2026-08-10 | RHD4CZ5L016ST1100 |
| RHD4CZ5L016ST1202 |  | Bedding works for GRP Pipe Line 600 mm - (RD-L-16)-Z5-L016-ST | 2d | 2026-08-11 | 2026-08-12 | RHD4CZ5L016ST1102 |
| RHD4CZ5L016ST1302 |  | Installing for GRP Pipe Line 600 mm - (RD-L-16)-Z5-L016-ST | 2d | 2026-08-13 | 2026-08-15 | RHD4CZ5L016ST1202 |
| RHD4CZ5L016ST1402 |  | Primary Test for GRP Pipe Line 600 mm - (RD-L-16)-Z5-L016-ST | 2d | 2026-08-16 | 2026-08-17 | RHD4CZ5L016ST1302 |

| ID | WBS | Task | Duration | Start | Finish | Predecessors |
| --- | --- | --- | --- | --- | --- | --- |
| RHD4CZ5L016ST1502 |  | Backfilling and warning tape works for GRP Pipe Line 600 mm - (RD-L-16)-Z5-L016-ST | 2d | 2026-08-18 | 2026-08-19 | RHD4CZ5L016ST1402 |
|  | 6393 | **RHD4-02-002-L016-(ST)-GRP Pipes - 1300 mm diameter** |  | 2026-08-11 | 2026-08-22 |  |
| RHD4CZ5L016ST1109 |  | Excavation works for GRP Pipe Line 1300 mm - (RD-L-16)-Z5-L016-ST | 2d | 2026-08-11 | 2026-08-12 | RHD4CZ5L016ST1102 |
| RHD4CZ5L016ST1209 |  | Bedding works for GRP Pipe Line 1300 mm - (RD-L-16)-Z5-L016-ST | 2d | 2026-08-13 | 2026-08-15 | RHD4CZ5L016ST1109 |
| RHD4CZ5L016ST1309 |  | Installing for GRP Pipe Line 1300 mm - (RD-L-16)-Z5-L016-ST | 2d | 2026-08-16 | 2026-08-17 | RHD4CZ5L016ST1209 |
| RHD4CZ5L016ST1409 |  | Primary Test for GRP Pipe Line 1300 mm - (RD-L-16)-Z5-L016-ST | 2d | 2026-08-18 | 2026-08-19 | RHD4CZ5L016ST1309 |
| RHD4CZ5L016ST1509 |  | Backfilling and warning tape works for GRP Pipe Line 1300 mm - (RD-L-16)-Z5-L016-ST | 2d | 2026-08-20 | 2026-08-22 | RHD4CZ5L016ST1409 |
|  | 3753 | **RHD4-02-002-L016-(ST)-MH Works - 1500 mm diameter** |  | 2026-07-30 | 2026-08-10 |  |
| RHD4CZ5L016ST3101 |  | Excavation and PC Blinding works for MH 1500 mm - (RD-L-16)-Z5-L016-ST | 2d | 2026-07-30 | 2026-08-01 | RHD4CZ5L016ST3102, RHD4ENSDZ5APPST110, RHD4ENMSST2000 |
| RHD4CZ5L016ST3201 |  | Installation of Base for MH 1500 mm - (RD-L-16)-Z5-L016-ST | 2d | 2026-08-02 | 2026-08-03 | RHD4CZ5L016ST3101 |
| RHD4CZ5L016ST3301 |  | MH Ring and C.Slab works and Backfilling works for MH 1500 mm - (RD-L-16)-Z5-L016-ST | 2d | 2026-08-04 | 2026-08-05 | RHD4CZ5L016ST3201 |
| RHD4CZ5L016ST3401 |  | Steel Cover for MH 1500 mm - (RD-L-16)-Z5-L016-ST | 2d | 2026-08-06 | 2026-08-08 | RHD4CZ5L016ST3301, RHD4CZ5L016ST3402 |
| RHD4CZ5L016ST3501 |  | Finishing, Benching, Testing works for MH 1500 mm - (RD-L-16)-Z5-L016-ST | 2d | 2026-08-09 | 2026-08-10 | RHD4CZ5L016ST3401, RHD4CZ5L016ST3502 |
|  | 3752 | **RHD4-02-002-L016-(ST)-MH Works - 1200 mm diameter** |  | 2026-08-02 | 2026-08-12 |  |
| RHD4CZ5L016ST3100 |  | Excavation and PC Blinding works for MH 1200 mm - (RD-L-16)-Z5-L016-ST | 2d | 2026-08-02 | 2026-08-03 | RHD4CZ5L016ST3101, RHD4ENSDZ5APPST110, RHD4ENMSST2000, RHD4ENMSST2010, RHD4ENMSEW2000, RHD4ENMSEW2010, RHD4ENSDZ5APPEW100 SS, RHD4ENSDZ7APPEW100 SS, RHD4ENSDZ8APPEW100 SS |
| RHD4CZ5L016ST3200 |  | Installation of Base for MH 1200 mm - (RD-L-16)-Z5-L016-ST | 2d | 2026-08-04 | 2026-08-05 | RHD4CZ5L016ST3100, RHD4PRSHLSTAGST1604 |
| RHD4CZ5L016ST3300 |  | MH Ring and C.Slab works and Backfilling works for MH 1200 mm - (RD-L-16)-Z5-L016-ST | 2d | 2026-08-06 | 2026-08-08 | RHD4CZ5L016ST3200, RHD4PRSHLDOSST1604 |
| RHD4CZ5L016ST3400 |  | Steel Cover for MH 1200 mm - (RD-L-16)-Z5-L016-ST | 2d | 2026-08-09 | 2026-08-10 | RHD4CZ5L016ST3300, RHD4CZ5L016ST3401 |
| RHD4CZ5L016ST3500 |  | Finishing, Benching, Testing works for MH 1200 mm - (RD-L-16)-Z5-L016-ST | 2d | 2026-08-11 | 2026-08-12 | RHD4CZ5L016ST3400 |
|  | 3747 | **RHD4-02-002-L016-(ST)-GRP Pipes - 1500 mm diameter** |  |  |  |  |
|  | 3743 | **RHD4-02-002-L016-(ST)-GRP Pipes - 1100 mm diameter** |  |  |  |  |
|  | 3739 | **RHD4-02-002-L016-(ST)-GRP Pipes - 700 mm diameter** |  | 2026-07-28 | 2026-08-08 |  |
| RHD4CZ5L016ST1103 |  | Excavation works for GRP Pipe Line 700 mm - (RD-L-16)-Z5-L016-ST | 2d | 2026-07-28 | 2026-07-29 | RHD4ENSDZ5APPST110, RHD4CZ5C051ST3101 |
| RHD4CZ5L016ST1203 |  | Bedding works for GRP Pipe Line 700 mm - (RD-L-16)-Z5-L016-ST | 2d | 2026-07-30 | 2026-08-01 | RHD4CZ5L016ST1103 |
| RHD4CZ5L016ST1303 |  | Installing for GRP Pipe Line 700 mm - (RD-L-16)-Z5-L016-ST | 2d | 2026-08-02 | 2026-08-03 | RHD4CZ5L016ST1203, RHD4PRSHLSTAGST1004, RHD4PRSHLDOSST1604, RHD4PRSHLPOST1000, RHD4PRSHLDOSST1004 |
| RHD4CZ5L016ST1403 |  | Primary Test for GRP Pipe Line 700 mm - (RD-L-16)-Z5-L016-ST | 2d | 2026-08-04 | 2026-08-05 | RHD4CZ5L016ST1303 |
| RHD4CZ5L016ST1503 |  | Backfilling and warning tape works for GRP Pipe Line 700 mm - (RD-L-16)-Z5-L016-ST | 2d | 2026-08-06 | 2026-08-08 | RHD4CZ5L016ST1403 |
|  | 3737 | **RHD4-02-002-L016-(ST)-GRP Pipes - 500 mm diameter** |  |  |  |  |
|  | 3750 | **RHD4-02-002-L016-(ST)-UPVC Pipes - 300 mm diameter** |  | 2026-07-30 | 2026-08-10 |  |
| RHD4CZ5L016ST2100 |  | Excavation works for UPVC Pipe Line 300 mm - (RD-L-16)-Z5-L016-ST | 2d | 2026-07-30 | 2026-08-01 | RHD4ENSDZ5APPST110, RHD4CZ5L016ST1103 |
| RHD4CZ5L016ST2200 |  | Bedding works for UPVC Pipe Line 300 mm - (RD-L-16)-Z5-L016-ST | 2d | 2026-08-02 | 2026-08-03 | RHD4CZ5L016ST2100 |
| RHD4CZ5L016ST2300 |  | Installing for UPVC Pipe Line 300 mm - (RD-L-16)-Z5-L016-ST | 2d | 2026-08-04 | 2026-08-05 | RHD4CZ5L016ST2200, RHD4PRSHLDOSST1104, RHD4PRSHLSTAGST1104 |
| RHD4CZ5L016ST2400 |  | Primary Test for UPVC Pipe Line 300 mm - (RD-L-16)-Z5-L016-ST | 2d | 2026-08-06 | 2026-08-08 | RHD4CZ5L016ST2300 |
| RHD4CZ5L016ST2500 |  | Backfilling and warning tape works for UPVC Pipe Line 300 mm - (RD-L-16)-Z5-L016-ST | 2d | 2026-08-09 | 2026-08-10 | RHD4CZ5L016ST2400, RHD4CZ5L016ST6100 |
|  | 3758 | **RHD4-02-002-L016-(ST)-Concrete Encasement** |  | 2026-08-04 | 2026-08-05 |  |
| RHD4CZ5L016ST6100 |  | Pipe Encasement for Storm Pipelines - (RD-L-16)-Z5-L016-ST | 2d | 2026-08-04 | 2026-08-05 | RHD4CZ5L016ST2300 SS, RHD4CZ5L016ST2300 FF, RHD4CZ5L016ST2200 |
|  | 3759 | **RHD4-02-002-Z5-L016-Catch Basin - ST** |  | 2026-08-02 | 2026-08-20 |  |
|  | 6409 | **RHD4-02-002-L016-(ST)-Double Catch Basin Works** |  | 2026-08-02 | 2026-08-12 |  |
| RHD4CZ5L016ST8100 |  | Excavation works for Double Catch Basin - (RD-L-16)-Z5-L016-ST | 2d | 2026-08-02 | 2026-08-03 | RHD4CZ5L016ST2100 |
| RHD4CZ5L016ST8200 |  | PC Blinding, Installation and Pipe connection for Double Catch Basin - (RD-L-16)-Z5-L016-ST | 2d | 2026-08-04 | 2026-08-05 | RHD4CZ5L016ST8100 |
| RHD4CZ5L016ST8300 |  | Rings & C.Slab & Final Backfillfor Double Catch Basin - (RD-L-16)-Z5-L016-ST | 2d | 2026-08-06 | 2026-08-08 | RHD4CZ5L016ST8200 |
| RHD4CZ5L016ST8400 |  | Steel Cover for Double Catch Basin - (RD-L-16)-Z5-L016-ST | 2d | 2026-08-09 | 2026-08-10 | RHD4CZ5L016ST8300 |
| RHD4CZ5L016ST8500 |  | Finishing and Insulation works for Double Catch Basin - (RD-L-16)-Z5-L016-ST | 2d | 2026-08-11 | 2026-08-12 | RHD4CZ5L016ST8400 |
|  | 3760 | **RHD4-02-002-L016-(ST)-Single Catch Basin Works** |  | 2026-08-09 | 2026-08-20 |  |
| RHD4CZ5L016ST7100 |  | Excavation works for Single Catch Basin - (RD-L-16)-Z5-L016-ST | 2d | 2026-08-09 | 2026-08-10 | RHD4CZ5L016ST3300, RHD4CZ5L016ST3301, RHD4ENSDZ5APPST110 |
| RHD4CZ5L016ST7200 |  | PC Blinding, Installation and Pipe connection for Single Catch Basin - (RD-L-16)-Z5-L016-ST | 2d | 2026-08-11 | 2026-08-12 | RHD4CZ5L016ST7100 |
| RHD4CZ5L016ST7300 |  | Rings & C.Slab & Final Backfill for Single Catch Basin - (RD-L-16)-Z5-L016-ST | 2d | 2026-08-13 | 2026-08-15 | RHD4CZ5L016ST7200 |
| RHD4CZ5L016ST7400 |  | Steel Cover for Single Catch Basin - (RD-L-16)-Z5-L016-ST | 2d | 2026-08-16 | 2026-08-17 | RHD4CZ5L016ST7300, RHD4PRSHLDOSST1704, RHD4CZ5L016ST3400 |
| RHD4CZ5L016ST7500 |  | Finishing and Insulation works for Single Catch Basin - (RD-L-16)-Z5-L016-ST | 3d | 2026-08-18 | 2026-08-20 | RHD4CZ5L016ST7400, RHD4CZ5L016ST3500, RHD4CZ5L016ST1500 |
|  | 4299 | **RHD4-02-002-Z5-L016-Concrete Box Culvert - ST** |  | 2026-06-13 | 2026-08-20 |  |
|  | 4300 | **RHD4-02-002-L016-(ST)-Concrete Box Culvert** |  | 2026-06-13 | 2026-08-20 |  |
| RHD4CZ5L016ST4100 |  | Excavation works for Box Culvert - (RD-L-16)-Z5-C016-ST(Completed) | 46d | 2026-06-13 | 2026-08-04 | RHD4PRSHLDOSST1003 SS, RHD4ENMSTUN2000 |
| RHD4CZ5L016ST4200 |  | PC works for Box Culvert - (RD-L-16)-Z5-C016-ST(Completed) | 43d | 2026-06-13 | 2026-08-01 | RHD4CZ5L016ST4100 SS |
| RHD4CZ5L016ST4400 |  | Raft works for Box Culvert - (RD-L-16)-Z5-C016-ST(Completed) | 21d | 2026-06-13 | 2026-07-06 | RHD4CZ5L016ST4200 SS, RHD4CZ5L08RW3000 |
| RHD4CZ5L016ST4500 |  | Wall and slab works for Box Culvert - (RD-L-16)-Z5-C016-ST | 2d | 2026-08-05 | 2026-08-06 | RHD4CZ5L016ST4400, RHD4CZ5L016ST4200, RHD4ENMSTUN2000, RHD4CZ5L016ST4100 |
| RHD4CZ5L016ST4700 |  | Backfilling works for Box Culvert - (RD-L-16)-Z5-C016-ST | 4d | 2026-08-15 | 2026-08-18 | RHD4CZ5L016ST4500, RHD4CZ5L016ST5300 |
| RHD4CZ5L016ST4600 |  | Insulation and Testing for Box Culvert - (RD-L-16)-Z5-C016-ST | 2d | 2026-08-19 | 2026-08-20 | RHD4CZ5L016ST4700, RHD4CZ5L016ST5400 |
|  | 4301 | **RHD4-02-002-L016-(ST)-Concrete Chambers** |  | 2026-08-08 | 2026-08-16 |  |
| RHD4CZ5L016ST5100 |  | Excavation and Bedding for Concrete Chambers - for Box Culvert - (RD-L-16)-Z5-C016-ST | 2d | 2026-08-08 | 2026-08-09 | RHD4CZ5L016ST4500 |
| RHD4CZ5L016ST5200 |  | PC works for Concrete Chambers - for Box Culvert - (RD-L-16)-Z5-C016-ST | 2d | 2026-08-10 | 2026-08-11 | RHD4CZ5L016ST5100 |
| RHD4CZ5L016ST5300 |  | Installation for Concrete Chambers - for Box Culvert - (RD-L-16)-Z5-C016-ST | 2d | 2026-08-12 | 2026-08-13 | RHD4CZ5L016ST5200 |
| RHD4CZ5L016ST5400 |  | Backfilling works for Concrete Chambers - for Box Culvert - (RD-L-16)-Z5-C016-ST | 2d | 2026-08-15 | 2026-08-16 | RHD4CZ5L016ST5300 |
|  | 3784 | **RHD4-02-002-Z5-L016-Sewage Network - SW** |  | 2026-10-11 | 2026-12-12 |  |
|  | 1 | **Missing ID** |  | 2026-10-11 | 2026-10-22 |  |
| RHD4CZ5L016SW4101 |  | Excavation and Bedding for Air Valve Chamber for HDPE force Main - (RD-L-16)-Z5-L016-SW | 2d | 2026-10-11 | 2026-10-12 | RHD4CZ5L016SW3101 SS, RHD4CZ5L016RD2100 |
| RHD4CZ5L016SW4201 |  | PC works for Air Valve Chamber for HDPE force Main - (RD-L-16)-Z5-L016-SW | 2d | 2026-10-13 | 2026-10-14 | RHD4CZ5L016SW4101 |
| RHD4CZ5L016SW4301 |  | Installation for Air Valve Chamber for HDPE force Main - (RD-L-16)-Z5-L016-SW | 2d | 2026-10-15 | 2026-10-16 | RHD4CZ5L016SW4201 |
| RHD4CZ5L016SW4401 |  | Backfilling works for Air Valve Chamber for HDPE force Main - (RD-L-16)-Z5-L016-SW | 2d | 2026-10-17 | 2026-10-18 | RHD4CZ5L016SW4301 |
| RHD4CZ5L016SW5101 |  | Installation for Air Valves for HDPE force Main - (RD-L-16)-Z5-L016-SW | 2d | 2026-10-19 | 2026-10-20 | RHD4CZ5L016SW4401 |
| RHD4CZ5L016SW5201 |  | Stem and Service box for Air Valves for HDPE force Main - (RD-L-16)-Z5-L016-SW | 2d | 2026-10-21 | 2026-10-22 | RHD4CZ5L016SW5101, RHD4CZ5L016ST4600 |

| ID | WBS | Task | Duration | Start | Finish | Predecessors |
| --- | --- | --- | --- | --- | --- | --- |
|  | 957 | **RHD4-02-002-L016-(SW)-MH Works - 1200 mm diameter with Back drop** |  | 2026-10-11 | 2026-10-21 |  |
| RHD4CZ5L016SW3101 |  | Excavation and PC Blinding works for MH 1200 mm - (RD-L-16)-Z5-L016-SW | 2d | 2026-10-11 | 2026-10-12 | RHD4CZ5L08ST5400, RHD4CZ5L016ST7100, RHD4CZ7C013IRR3200 |
| RHD4CZ5L016SW3201 |  | Installation of Base for MH 1200 mm - (RD-L-16)-Z5-L016-SW | 2d | 2026-10-13 | 2026-10-14 | RHD4CZ5L016SW3101 |
| RHD4CZ5L016SW3301 |  | MH Ring and C.Slab works and Backfilling works for MH 1200 mm - (RD-L-16)-Z5-L016-SW | 2d | 2026-10-15 | 2026-10-17 | RHD4CZ5L016SW3201 |
| RHD4CZ5L016SW3401 |  | Steel Cover for MH 1200 mm - (RD-L-16)-Z5-L016-SW | 2d | 2026-10-18 | 2026-10-19 | RHD4CZ5L016SW3301 |
| RHD4CZ5L016SW3501 |  | Finishing, Benching, Testing works for MH 1200 mm - (RD-L-16)-Z5-L016-SW | 2d | 2026-10-20 | 2026-10-21 | RHD4CZ5L016SW3401 |
|  | 4358 | **RHD4-02-002-L016-(SW)-HDPE Pipes - 250 mm diameter** |  | 2026-10-13 | 2026-10-24 |  |
| RHD4CZ5L016SW2600 |  | Excavation works for HDPE Force Main Pipeline 250 mm - (RD-L-16)-Z5-L016-SW | 2d | 2026-10-13 | 2026-10-14 | RHD4CZ5L016SW3101, RHD4CZ7C02ST5400 |
| RHD4CZ5L016SW2700 |  | Bedding works for HDPE Force Main Pipeline 250 mm - (RD-L-16)-Z5-L016-SW | 2d | 2026-10-15 | 2026-10-17 | RHD4CZ5L016SW2600 |
| RHD4CZ5L016SW2800 |  | Installing for HDPE Force Main Pipeline 250 mm - (RD-L-16)-Z5-L016-SW | 2d | 2026-10-18 | 2026-10-19 | RHD4CZ5L016SW2700 |
| RHD4CZ5L016SW2900 |  | Primary Test for HDPE Force Main Pipeline 250 mm - (RD-L-16)-Z5-L016-SW | 2d | 2026-10-20 | 2026-10-21 | RHD4CZ5L016SW2800 |
| RHD4CZ5L016SW3000 |  | Backfilling and warning tape works for HDPE Force Main Pipeline 250 mm - (RD-L-16)-Z5-L016-SW | 2d | 2026-10-22 | 2026-10-24 | RHD4CZ5L016SW3301, RHD4CZ5L016SW2900 |
|  | 3794 | **RHD4-02-002-L016-(SW)-MH Works - 1200 mm diameter** |  | 2026-10-15 | 2026-12-12 |  |
| RHD4CZ5L016SW3100 |  | Excavation and PC Blinding works for MH 1200 mm - (RD-L-16)-Z5-L016-SW | 8d | 2026-10-15 | 2026-10-24 | RHD4ENSDZ5APPSW120, RHD4CZ5L016SW2600 |
| RHD4CZ5L016SW3200 |  | Installation of Base for MH 1200 mm - (RD-L-16)-Z5-L016-SW | 12d | 2026-10-25 | 2026-11-07 | RHD4CZ5L016SW3100 |
| RHD4CZ5L016SW3300 |  | MH Ring and C.Slab works and Backfilling works for MH 1200 mm - (RD-L-16)-Z5-L016-SW | 12d | 2026-11-08 | 2026-11-21 | RHD4CZ5L016SW3200 |
| RHD4CZ5L016SW3400 |  | Steel Cover for MH 1200 mm - (RD-L-16)-Z5-L016-SW | 6d | 2026-11-22 | 2026-11-28 | RHD4CZ5L016SW3300 |
| RHD4CZ5L016SW3500 |  | Finishing, Benching, Testing works for MH 1200 mm - (RD-L-16)-Z5-L016-SW | 12d | 2026-11-29 | 2026-12-12 | RHD4CZ5L016SW3400 |
|  | 3785 | **RHD4-02-002-L016-(SW)-GRP Pipes - 300 mm diameter** |  | 2026-11-08 | 2026-12-01 |  |
| RHD4CZ5L016SW1100 |  | Excavation works for GRP Pipe Line 300 mm - (RD-L-16)-Z5-L016-SW | 2d | 2026-11-08 | 2026-11-09 | RHD4CZ5L016SW3200, RHD4ENSDZ5APPSW120, RHD4CZ5L016SW3100 |
| RHD4CZ5L016SW1200 |  | Bedding works for GRP Pipe Line 300 mm - (RD-L-16)-Z5-L016-SW | 2d | 2026-11-10 | 2026-11-11 | RHD4CZ5L016SW1100 |
| RHD4CZ5L016SW1300 |  | Installing for GRP Pipe Line 300 mm - (RD-L-16)-Z5-L016-SW | 2d | 2026-11-22 | 2026-11-23 | RHD4CZ5L016SW1200, RHD4CZ5L016SW3300 |
| RHD4CZ5L016SW1400 |  | Primary Test for GRP Pipe Line 300 mm - (RD-L-16)-Z5-L016-SW | 2d | 2026-11-24 | 2026-11-25 | RHD4CZ5L016SW1300 |
| RHD4CZ5L016SW1500 |  | Backfilling and warning tape works for GRP Pipe Line 300 mm - (RD-L-16)-Z5-L016-SW | 5d | 2026-11-26 | 2026-12-01 | RHD4CZ5L016SW1400, RHD4CZ4L014ST3501, RHD4CZ4C031ST7500 |
|  | 3790 | **RHD4-02-002-L016-(SW)-UPVC Pipes - 200 mm diameter** |  | 2026-11-10 | 2026-12-06 |  |
| RHD4CZ5L016SW2100 |  | Excavation works for UPVC Pipe Line 200 mm - (RD-L-16)-Z5-L016-SW | 4d | 2026-11-10 | 2026-11-14 | RHD4CZ5L016SW1100, RHD4ENSDZ5APPSW120, RHD4CZ5L016SW1100 FF |
| RHD4CZ5L016SW2200 |  | Bedding works for UPVC Pipe Line 200 mm - (RD-L-16)-Z5-L016-SW | 4d | 2026-11-15 | 2026-11-18 | RHD4CZ5L016SW2100, RHD4CZ5L016SW1200 |
| RHD4CZ5L016SW2300 |  | Installing for UPVC Pipe Line 200 mm - (RD-L-16)-Z5-L016-SW | 4d | 2026-11-24 | 2026-11-28 | RHD4CZ5L016SW2200, RHD4CZ5L016SW1300 |
| RHD4CZ5L016SW2400 |  | Primary Test for UPVC Pipe Line 200 mm - (RD-L-16)-Z5-L016-SW | 3d | 2026-11-29 | 2026-12-01 | RHD4CZ5L016SW2300, RHD4CZ5L016SW1400 |
| RHD4CZ5L016SW2500 |  | Backfilling and warning tape works for UPVC Pipe Line 200 mm - (RD-L-16)-Z5-L016-SW | 4d | 2026-12-02 | 2026-12-06 | RHD4CZ5L016SW2400, RHD4CZ5L016SW1500, RHD4CZ5L08SW3500, RHD4CZ5L08PT3200, RHD4CZ6C052SL6100 |
|  | 3793 | **RHD4-02-002-L016-(SW)-Concrete Encasement** |  |  |  |  |
|  | 3821 | **RHD4-02-002-Z5-L016-Potable Network - PT** |  | 2026-12-07 | 2027-02-03 |  |
|  | 3824 | **RHD4-02-002-L016-(PT)-HDPE Pipes - 200 mm diameter** |  | 2026-12-07 | 2026-12-20 |  |
| RHD4CZ5L016PT1102 |  | Excavation works for HDPE Pipline 200 mm - (RD-L-16)-Z5-L016-PT | 2d | 2026-12-07 | 2026-12-08 | RHD4CZ5L016SW1500, RHD4CZ5L016SW2500, RHD4ENSDZ5APPPT130, RHD4ENMSPT2000, RHD4CZ4L09ST7500, RHD4CZ2C082PT3202, RHD4CZ2L011SL5200, RHD4CZ4C031SL5200 |
| RHD4CZ5L016PT1202 |  | Bedding works for HDPE Pipline 200 mm - (RD-L-16)-Z5-L016-PT | 2d | 2026-12-09 | 2026-12-10 | RHD4CZ5L016PT1102 |
| RHD4CZ5L016PT1302 |  | Installing for HDPE Pipline 200 mm - (RD-L-16)-Z5-L016-PT | 4d | 2026-12-12 | 2026-12-15 | RHD4CZ5L016PT1202, RHD4PRSHLDOSPT1000, RHD4PRSHLSTAGPT1000 |
| RHD4CZ5L016PT1402 |  | Primary Test for HDPE Pipline 200 mm - (RD-L-16)-Z5-L016-PT | 2d | 2026-12-16 | 2026-12-17 | RHD4CZ5L016PT1302 |
| RHD4CZ5L016PT1502 |  | Backfilling and warning tape works for HDPE Pipline 200 mm - (RD-L-16)-Z5-L016-PT | 2d | 2026-12-19 | 2026-12-20 | RHD4CZ5L016PT1402 |
|  | 3823 | **RHD4-02-002-L016-(PT)-HDPE Pipes - 160 mm diameter** |  | 2026-12-09 | 2027-01-07 |  |
| RHD4CZ5L016PT1101 |  | Excavation works for HDPE Pipline 160 mm - (RD-L-16)-Z5-L016-PT | 3d | 2026-12-09 | 2026-12-12 | RHD4CZ5L016PT1102, RHD4CZ5L016SW1500, RHD4CZ5L016SW2500, RHD4ENSDZ5APPPT130, RHD4ENMSPT2000, RHD4CZ5L08PT1501 |
| RHD4CZ5L016PT1201 |  | Bedding works for HDPE Pipline 160 mm - (RD-L-16)-Z5-L016-PT | 3d | 2026-12-13 | 2026-12-15 | RHD4CZ5L016PT1101, RHD4CZ5L016PT1202, RHD4CZ5L08SW6100 |
| RHD4CZ5L016PT1301 |  | Installing for HDPE Pipline 160 mm - (RD-L-16)-Z5-L016-PT | 5d | 2026-12-16 | 2026-12-21 | RHD4CZ5L016PT1201, RHD4CZ5L016PT1302, RHD4PRSHLDOSPT1000, RHD4PRSHLSTAGPT1000 |
| RHD4CZ5L016PT1401 |  | Primary Test for HDPE Pipline 160 mm - (RD-L-16)-Z5-L016-PT | 2d | 2027-01-02 | 2027-01-03 | RHD4CZ5L016PT1301, RHD4CZ5L016PT1402, RHD4CZ5L016PT5100, RHD4CZ5L08IRR1502, RHD4CZ5L08IRR3200, RHD4CZ5C061SL2400 |
| RHD4CZ5L016PT1501 |  | Backfilling and warning tape works for HDPE Pipline 160 mm - (RD-L-16)-Z5-L016-PT | 4d | 2027-01-04 | 2027-01-07 | RHD4CZ5L016PT1401, RHD4CZ5L016PT1502 |
|  | 3822 | **RHD4-02-002-L016-(PT)-HDPE Pipes - 110 mm diameter** |  | 2026-12-13 | 2027-01-10 |  |
| RHD4CZ5L016PT1100 |  | Excavation works for HDPE Pipline 110 mm - (RD-L-16)-Z5-L016-PT | 2d | 2026-12-13 | 2026-12-14 | RHD4CZ5L016PT1101, RHD4CZ5L016SW1500, RHD4CZ5L016SW2500, RHD4ENSDZ5APPPT130, RHD4ENMSPT2000 |
| RHD4CZ5L016PT1200 |  | Bedding works for HDPE Pipline 110 mm - (RD-L-16)-Z5-L016-PT | 2d | 2026-12-16 | 2026-12-17 | RHD4CZ5L016PT1100, RHD4CZ5L016PT1201 |
| RHD4CZ5L016PT1300 |  | Installing for HDPE Pipline 110 mm - (RD-L-16)-Z5-L016-PT | 2d | 2026-12-22 | 2026-12-23 | RHD4CZ5L016PT1200, RHD4CZ5L016PT1301, RHD4PRSHLDOSPT1000, RHD4PRSHLSTAGPT1000, RHD4CZ1C081IRR3203 |
| RHD4CZ5L016PT1400 |  | Primary Test for HDPE Pipline 110 mm - (RD-L-16)-Z5-L016-PT | 4d | 2027-01-04 | 2027-01-07 | RHD4CZ5L016PT1300, RHD4CZ5L016PT1401, RHD4CZ5L016PT5100 |
| RHD4CZ5L016PT1500 |  | Backfilling and warning tape works for HDPE Pipline 110 mm - (RD-L-16)-Z5-L016-PT | 2d | 2027-01-09 | 2027-01-10 | RHD4CZ5L016PT1400, RHD4CZ5L016PT1501 |
|  | 3827 | **RHD4-02-002-L016-(PT)-Gate Valves (Direct Buried)** |  | 2026-12-22 | 2027-01-13 |  |
| RHD4CZ5L016PT3100 |  | Installation for Direct Buried Gate Valves - (RD-L-16)-Z5-L016-PT | 3d | 2026-12-22 | 2026-12-24 | RHD4CZ5L016PT1302 FF, RHD4CZ5L016PT1301 FF, RHD4CZ5L016PT1300 FF, RHD4CZ5L016PT1302 SS, RHD4CZ5L016PT1301 SS, RHD4CZ5L016PT1300 SS, RHD4PRSHLDOSPT1200, RHD4PRSHLSTAGPT1200 |
| RHD4CZ5L016PT3200 |  | Stem and Service box for Direct Buried Gate Valves - (RD-L-16)-Z5-L016-PT | 3d | 2027-01-11 | 2027-01-13 | RHD4CZ5L016PT3100, RHD4CZ5L016PT1502, RHD4CZ5L016PT1501, RHD4CZ5L016PT1500 |
|  | 3830 | **RHD4-02-002-L016-(PT)-Wash out Valve Chambers** |  | 2026-12-21 | 2027-01-20 |  |
| RHD4CZ5L016PT2101 |  | Excavation and Bedding for Wash out Valve Chambers for Potable Water Network - (RD-L-16)-Z5-L016-PT | 2d | 2026-12-21 | 2026-12-22 | RHD4CZ5L016PT1502, RHD4ENSDZ5APPPT130 |
| RHD4CZ5L016PT2201 |  | PC works for Wash out Valve Chambers for Potable Water Network - (RD-L-16)-Z5-L016-PT | 2d | 2027-01-14 | 2027-01-16 | RHD4CZ5L016PT2101, RHD4CZ5L016PT3200 |
| RHD4CZ5L016PT2301 |  | Installation for Wash out Valve Chambers for Potable Water Network - (RD-L-16)-Z5-L016-PT | 2d | 2027-01-17 | 2027-01-18 | RHD4CZ5L016PT2201, RHD4PRSHLDOSPT1100, RHD4PRSHLDOSPT1400, RHD4PRSHLSTAGPT1100, RHD4PRSHLSTAGPT1400 |
| RHD4CZ5L016PT2401 |  | Backfilling works for Wash out Valve Chambers for Potable Water Network - (RD-L-16)-Z5-L016-PT | 2d | 2027-01-19 | 2027-01-20 | RHD4CZ5L016PT2301 |
|  | 3831 | **RHD4-02-002-L016-(PT)-Wash out Valves** |  | 2026-12-23 | 2027-01-23 |  |
| RHD4CZ5L016PT3102 |  | Installation for Wash out Valves for Potable Water Network - (RD-L-16)-Z5-L016-PT | 2d | 2026-12-23 | 2026-12-24 | RHD4PRSHLDOSPT1200, RHD4PRSHLSTAGPT1200, RHD4CZ5L016PT2101 |
| RHD4CZ5L016PT3202 |  | Stem and Service box for Wash out Valves for Potable Water Network - (RD-L-16)-Z5-L016-PT | 2d | 2027-01-21 | 2027-01-23 | RHD4CZ5L016PT3102, RHD4CZ5L016PT2401, RHD4PRSHLDOSPT1300, RHD4PRSHLSTAGPT1300 |
|  | 3834 | **RHD4-02-002-L016-(PT)-Fire Hydrant** |  | 2027-01-11 | 2027-02-03 |  |
| RHD4CZ5L016PT4100 |  | Excavation and Bedding and Pipe Installation for Fire Hydrant - (RD-L-16)-Z5-L016-PT | 4d | 2027-01-11 | 2027-01-14 | RHD4CZ5L016PT1502, RHD4CZ5L016PT1501, RHD4CZ5L016PT1500, RHD4ENSDZ5APPPT130 |
| RHD4CZ5L016PT4200 |  | Valve Installation for Fire Hydrant - (RD-L-16)-Z5-L016-PT | 3d | 2027-01-16 | 2027-01-18 | RHD4CZ5L016PT4100 |
| RHD4CZ5L016PT4300 |  | Stem for Fire Hydrant - (RD-L-16)-Z5-L016-PT | 3d | 2027-01-19 | 2027-01-21 | RHD4CZ5L016PT4200 |
| RHD4CZ5L016PT4400 |  | Fire Installation for Fire Hydrant - (RD-L-16)-Z5-L016-PT | 3d | 2027-01-23 | 2027-01-25 | RHD4CZ5L016PT4300, RHD4CZ8L04SW3501, RHD4PRSHLDOSPT1500, RHD4PRSHLSTAGPT1500 |
| RHD4CZ5L016PT4500 |  | Protection Barriers for Fire Hydrant - (RD-L-16)-Z5-L016-PT | 8d | 2027-01-26 | 2027-02-03 | RHD4CZ5L016PT4400 |
|  | 3835 | **RHD4-02-002-L016-(PT)-Concrete Encasement** |  | 2026-12-22 | 2026-12-31 |  |
| RHD4CZ5L016PT5100 |  | Pipe Encasement for Potable Pipelines - (RD-L-16)-Z5-L016-PT | 9d | 2026-12-22 | 2026-12-31 | RHD4CZ5L016PT1302 FF, RHD4CZ5L016PT1301 FF, RHD4CZ5L016PT1300 FF, RHD4CZ5L016PT1302 SS, RHD4CZ5L016PT1301 SS, RHD4CZ5L016PT1300 SS, RHD4CZ5L016PT1202, RHD4CZ5L016PT1201, RHD4CZ5L016PT1200 |
|  | 3836 | **RHD4-02-002-Z5-L016-Irrigation Network - IRR** |  | 2026-12-13 | 2027-01-26 |  |

| ID | WBS | Task | Duration | Start | Finish | Predecessors |
| --- | --- | --- | --- | --- | --- | --- |
|  | 3839 | **RHD4-02-002-L016-(IRR)-HDPE Pipes - 200 mm diameter** |  | 2026-12-13 | 2026-12-30 |  |
| RHD4CZ5L016IRR1102 |  | Excavation works for HDPE Pipline 200 mm - (RD-L-16)-Z5-L016-IRR | 4d | 2026-12-13 | 2026-12-16 | RHD4CZ5L016PT1102, RHD4CZ5L016PT1101, RHD4ENSDZ5APPIRR140, RHD4ENMSRR2000 |
| RHD4CZ5L016IRR1202 |  | Bedding works for HDPE Pipline 200 mm - (RD-L-16)-Z5-L016-IRR | 3d | 2026-12-17 | 2026-12-20 | RHD4CZ5L016IRR1102 |
| RHD4CZ5L016IRR1302 |  | Installing for HDPE Pipline 200 mm - (RD-L-16)-Z5-L016-IRR | 4d | 2026-12-21 | 2026-12-24 | RHD4CZ5L016IRR1202, RHD4PRSHLDOSIRR1000, RHD4PRSHLSTAGIRR1000 |
| RHD4CZ5L016IRR1402 |  | Primary Test for HDPE Pipline 200 mm - (RD-L-16)-Z5-L016-IRR | 2d | 2026-12-26 | 2026-12-27 | RHD4CZ5L016IRR1302 |
| RHD4CZ5L016IRR1502 |  | Backfilling and warning tape works for HDPE Pipline 200 mm - (RD-L-16)-Z5-L016-IRR | 3d | 2026-12-28 | 2026-12-30 | RHD4CZ5L016IRR1402 |
|  | 1770 | **RHD4-02-002-L016-(IRR)-Air Valves** |  | 2027-01-10 | 2027-01-13 |  |
| RHD4CZ5L016IRR3103 |  | Installation for Air Valves for Irrigation Network - (RD-L-16)-Z5-L016-IRR | 2d | 2027-01-10 | 2027-01-11 | RHD4CZ5L016IRR2302 |
| RHD4CZ5L016IRR3203 |  | Stem and Service box for Air Valves for Irrigation Network - (RD-L-16)-Z5-L016-IRR | 2d | 2027-01-12 | 2027-01-13 | RHD4CZ5L016IRR3103, RHD4CZ5L016IRR2402 |
|  | 3843 | **RHD4-02-002-L016-(IRR)-HDPE Pipes - 450 mm diameter** |  |  |  |  |
|  | 6107 | **RHD4-02-002-L016-(IRR)-HDPE Pipes - 160 mm diameter** |  | 2027-01-12 | 2027-01-23 |  |
| RHD4CZ5L016IRR1100 |  | Excavation works for HDPE Pipline 160 mm - (RD-L-16)-Z5-L016-IRR | 2d | 2027-01-12 | 2027-01-13 | RHD4CZ5L016IRR3103 |
| RHD4CZ5L016IRR1200 |  | Bedding works for HDPE Pipline 160 mm - (RD-L-16)-Z5-L016-IRR | 2d | 2027-01-14 | 2027-01-16 | RHD4CZ5L016IRR1100 |
| RHD4CZ5L016IRR1300 |  | Installing for HDPE Pipline 160 mm - (RD-L-16)-Z5-L016-IRR | 2d | 2027-01-17 | 2027-01-18 | RHD4CZ5L016IRR1200 |
| RHD4CZ5L016IRR1400 |  | Primary Test for HDPE Pipline 160 mm - (RD-L-16)-Z5-L016-IRR | 2d | 2027-01-19 | 2027-01-20 | RHD4CZ5L016IRR1300 |
| RHD4CZ5L016IRR1500 |  | Backfilling and warning tape works for HDPE Pipline 160 mm - (RD-L-16)-Z5-L016-IRR | 2d | 2027-01-21 | 2027-01-23 | RHD4CZ5L016IRR1400 |
|  | 6115 | **RHD4-02-002-L016-(IRR)-Gate Valves (Direct Buried)** |  | 2027-01-17 | 2027-01-26 |  |
| RHD4CZ5L016IRR3100 |  | Installation for Direct Buried Gate Valves - (RD-L-16)-Z5-L016-IRR | 3d | 2027-01-17 | 2027-01-19 | RHD4CZ5L016IRR3103, RHD4CZ5L016IRR1300 SS, RHD4CZ5L016IRR1300 FF |
| RHD4CZ5L016IRR3200 |  | Stem and Service box for Direct Buried Gate Valves - (RD-L-16)-Z5-L016-IRR | 3d | 2027-01-24 | 2027-01-26 | RHD4CZ5L016SW5201, RHD4CZ5L016SW3501, RHD4CZ5L016IRR3100, RHD4CZ5L016IRR1500 |
|  | 6116 | **RHD4-02-002-L016-(IRR)-Butterfly Valve Chamber** |  | 2027-01-12 | 2027-01-20 |  |
| RHD4CZ5L016IRR2100 |  | Excavation and Bedding for Butterfly Valve Chamber for Irrigation Network - (RD-L-16)-Z5-L016-IRR | 2d | 2027-01-12 | 2027-01-13 | RHD4CZ5L016IRR3103 |
| RHD4CZ5L016IRR2200 |  | PC works for Butterfly Valve Chamber for Irrigation Network - (RD-L-16)-Z5-L016-IRR | 2d | 2027-01-14 | 2027-01-16 | RHD4CZ5L016IRR2100 |
| RHD4CZ5L016IRR2300 |  | Installation for Butterfly Valve Chamber for Irrigation Network - (RD-L-16)-Z5-L016-IRR | 2d | 2027-01-17 | 2027-01-18 | RHD4CZ5L016IRR2200 |
| RHD4CZ5L016IRR2400 |  | Backfilling works for Butterfly Valve Chamber for Irrigation Network - (RD-L-16)-Z5-L016-IRR | 2d | 2027-01-19 | 2027-01-20 | RHD4CZ5L016IRR2300 |
|  | 6117 | **RHD4-02-002-L016-(IRR)-Butterfly Valves** |  | 2027-01-19 | 2027-01-23 |  |
| RHD4CZ5L016IRR3101 |  | Installation for Butterfly Valves for Irrigation Network - (RD-L-16)-Z5-L016-IRR | 2d | 2027-01-19 | 2027-01-20 | RHD4CZ5L016IRR3103, RHD4CZ5L016IRR2300 |
| RHD4CZ5L016IRR3201 |  | Stem and Service box for Butterfly Valves for Irrigation Network - (RD-L-16)-Z5-L016-IRR | 2d | 2027-01-21 | 2027-01-23 | RHD4CZ5L016IRR3101, RHD4CZ5L016IRR2400 |
|  | 1769 | **RHD4-02-002-L016-(IRR)-Air Valve Chamber** |  | 2026-12-31 | 2027-01-11 |  |
| RHD4CZ5L016IRR2102 |  | Excavation and Bedding for Valve Chamber for Irrigation Network - (RD-L-16)-Z5-L016-IRR | 2d | 2026-12-31 | 2027-01-02 | RHD4CZ5L016IRR1502 |
| RHD4CZ5L016IRR2202 |  | PC works for Valve Chamber for Irrigation Network - (RD-L-16)-Z5-L016-IRR | 2d | 2027-01-03 | 2027-01-04 | RHD4CZ5L016IRR2102 |
| RHD4CZ5L016IRR2302 |  | Installation for Valve Chamber for Irrigation Network - (RD-L-16)-Z5-L016-IRR | 4d | 2027-01-05 | 2027-01-09 | RHD4CZ5L016IRR2202 |
| RHD4CZ5L016IRR2402 |  | Backfilling works for Valve Chamber for Irrigation Network - (RD-L-16)-Z5-L016-IRR | 2d | 2027-01-10 | 2027-01-11 | RHD4CZ5L016IRR2302 |
|  | 3842 | **RHD4-02-002-L016-(IRR)-HDPE Pipes - 400 mm diameter** |  |  |  |  |
|  | 3841 | **RHD4-02-002-L016-(IRR)-HDPE Pipes - 315 mm diameter** |  | 2026-12-15 | 2026-12-26 |  |
| RHD4CZ5L016IRR1104 |  | Excavation works for HDPE Pipline 315 mm - (RD-L-16)-Z5-L016-IRR | 2d | 2026-12-15 | 2026-12-16 | RHD4CZ5L016PT1102, RHD4CZ5L016PT1101, RHD4CZ5L016PT1100, RHD4ENSDZ5APPIRR140, RHD4ENMSRR2000 |
| RHD4CZ5L016IRR1204 |  | Bedding works for HDPE Pipline 315 mm - (RD-L-16)-Z5-L016-IRR | 2d | 2026-12-17 | 2026-12-19 | RHD4CZ5L016IRR1104 |
| RHD4CZ5L016IRR1304 |  | Installing for HDPE Pipline 315 mm - (RD-L-16)-Z5-L016-IRR | 2d | 2026-12-20 | 2026-12-21 | RHD4CZ5L016IRR1204, RHD4PRSHLDOSIRR1000, RHD4PRSHLSTAGIRR1000 |
| RHD4CZ5L016IRR1404 |  | Primary Test for HDPE Pipline 315 mm - (RD-L-16)-Z5-L016-IRR | 2d | 2026-12-22 | 2026-12-23 | RHD4CZ5L016IRR1304 |
| RHD4CZ5L016IRR1504 |  | Backfilling and warning tape works for HDPE Pipline 315 mm - (RD-L-16)-Z5-L016-IRR | 2d | 2026-12-24 | 2026-12-26 | RHD4CZ5L016IRR1404 |
|  | 3852 | **RHD4-02-002-L016-(IRR)-Concrete Encasement** |  |  |  |  |
|  | 3870 | **RHD4-02-002-Z5-L016-Medium Voltage Network - MV** |  | 2027-01-10 | 2027-02-02 |  |
|  | 3871 | **RHD4-02-002-L016-(MV)-Medium Voltage cable trench** |  | 2027-01-10 | 2027-01-25 |  |
| RHD4CZ5L016MV1100 |  | Excavation for Medium Voltage Trench - (RD-L-16)-Z5-L016-MV | 7d | 2027-01-10 | 2027-01-17 | RHD4ENSDZ5APPMV150, RHD4CZ5L016RD3100, RHD4CZ5L08LV3100 |
| RHD4CZ5L016MV1200 |  | Trench Backfilling for Medium Voltage Network - (RD-L-16)-Z5-L016-MV | 7d | 2027-01-18 | 2027-01-25 | RHD4CZ5L016MV1100 |
|  | 3873 | **RHD4-02-002-L016-(MV)-Medium Voltage cables 3Cx 500 mm²** |  | 2027-01-18 | 2027-02-02 |  |
| RHD4CZ5L016MV3100 |  | Installation of Medium Voltage Cables 3Cx 500 mm² - (RD-L-16)-Z5-L016-MV | 6d | 2027-01-18 | 2027-01-24 | RHD4CZ5L016MV1100, RHD4ENMSMV2000 |
| RHD4CZ5L016MV3200 |  | Joints Installation of Medium Voltage Cables 3Cx 500 mm² - (RD-L-16)-Z5-L016-MV | 2d | 2027-01-25 | 2027-01-26 | RHD4CZ5L016MV3100, RHD4PRSHLDOSMV1300, RHD4PRSHLSTAGMV1300 |
| RHD4CZ5L016MV3300 |  | Testing of Medium Voltage Cables 3Cx 500 mm² - (RD-L-16)-Z5-L016-MV | 6d | 2027-01-27 | 2027-02-02 | RHD4CZ5L016MV3200, RHD4CZ5L016MV1200 |
|  | 5388 | **RHD4-02-002-L07-(MV)-Normally open Point (Outdoor Type)** |  |  |  |  |
|  | 1982 | **RHD4-02-002-L07-(MV)-Medium Voltage cables 3Cx 50 mm²** |  | 2027-01-25 | 2027-01-26 |  |
| RHD4CZ5L016MV3401 |  | Termination of Medium Voltage Cables 3Cx 50 mm² - (RD-L-16)-Z5-L016-MV | 2d | 2027-01-25 | 2027-01-26 | RHD4CZ5L016MV3100 |
|  | 3877 | **RHD4-02-002-Z5-L016-Low Voltage Network - LV** |  | 2027-02-03 | 2027-02-11 |  |
|  | 3878 | **RHD4-02-002-L016-(LV)-Low Voltage duct banks** |  |  |  |  |
|  | 3880 | **RHD4-02-002-L016-(LV)-Low Voltage cables** |  | 2027-02-03 | 2027-02-11 |  |
| RHD4CZ5L016LV3100 |  | Excavation for Low Voltage Cables for Low Voltage Network - (RD-L-16)-Z5-L016-LV | 2d | 2027-02-03 | 2027-02-04 | RHD4ENSDZ5APPLV160, RHD4CZ5L016MV3300 |
| RHD4CZ5L016LV3200 |  | Cable Laying of Low Voltage Cables for Low Voltage Network - (RD-L-16)-Z5-L016-LV | 2d | 2027-02-06 | 2027-02-07 | RHD4CZ5L016LV3100, RHD4PRSHLDOSLV1100, RHD4ENMSLV2000, RHD4ENMSLV2010, RHD4PRSHLSTAGLV1100 |
| RHD4CZ5L016LV3300 |  | Warning tape and Backfill for Low Voltage Cables for Low Voltage Network - (RD-L-16)-Z5-L016-LV | 2d | 2027-02-08 | 2027-02-09 | RHD4CZ5L016LV3200 |
| RHD4CZ5L016LV3400 |  | Testing of Low Voltage Cables for Low Voltage Network - (RD-L-16)-Z5-L016-LV | 2d | 2027-02-10 | 2027-02-11 | RHD4CZ5L016LV3300 |
|  | 3883 | **RHD4-02-002-Z5-L016-Street Lighting Network - SL** |  | 2026-12-31 | 2027-04-11 |  |
|  | 3884 | **RHD4-02-002-L016-(SL)-Street Lighting duct banks** |  | 2026-12-31 | 2027-01-09 |  |
| RHD4CZ5L016SL2100 |  | Excavation of Duct Banks for Street Lighting Network - (RD-L-16)-Z5-L016-SL | 2d | 2026-12-31 | 2027-01-02 | RHD4ENSDZ5APPSL170, RHD4CZ5L016IRR1502 |
| RHD4CZ5L016SL2200 |  | Installation of Duct Banks for Street Lighting Network - (RD-L-16)-Z5-L016-SL | 2d | 2027-01-03 | 2027-01-04 | RHD4CZ5L016SL2100, RHD4PRSHLDOSSL1000, RHD4PRSHLSTAGSL1000 |
| RHD4CZ5L016SL2300 |  | Pouring of Duct Banks for Street Lighting Network - (RD-L-16)-Z5-L016-SL | 2d | 2027-01-05 | 2027-01-06 | RHD4CZ5L016SL2200 |
| RHD4CZ5L016SL2400 |  | Backfilling of Duct Banks for Street Lighting Network - (RD-L-16)-Z5-L016-SL | 2d | 2027-01-07 | 2027-01-09 | RHD4CZ5L016SL2300 |
|  | 3885 | **RHD4-02-002-L016-(SL)-Street Lighting Drawpit** |  | 2027-02-13 | 2027-02-16 |  |
| RHD4CZ5L016SL5100 |  | Excavation of Drawpit size 600x600x900mm for Street Lighting Network - (RD-L-16)-Z5-L016-SL | 2d | 2027-02-13 | 2027-02-14 | RHD4CZ5L016SL2300, RHD4ENSDZ5APPSL170, RHD4CZ5L016LV3400 |
| RHD4CZ5L016SL5200 |  | Installation of Drawpit size 600x600x900mm for Street Lighting Network - (RD-L-16)-Z5-L016-SL | 2d | 2027-02-15 | 2027-02-16 | RHD4CZ5L016SL5100, RHD4PRSHLDOSSL1400, RHD4PRSHLSTAGSL1400 |
|  | 3886 | **RHD4-02-002-L016-(SL)-Street Lighting cables** |  | 2027-02-17 | 2027-03-15 |  |
| RHD4CZ5L016SL3100 |  | Excavation for Street Lighting Cables for Street Lighting Network - (RD-L-16)-Z5-L016-SL | 6d | 2027-02-17 | 2027-02-24 | RHD4ENSDZ5APPSL170, RHD4CZ5L016SL5200 |
| RHD4CZ5L016SL3200 |  | Cable Laying of Street Lighting Cables for Street Lighting Network - (RD-L-16)-Z5-L016-SL | 5d | 2027-02-25 | 2027-03-02 | RHD4CZ5L016SL3100, RHD4PRSHLDOSSL1100, RHD4ENMSSL2000, RHD4ENMSSL2010, RHD4PRSHLSTAGSL1100 |

| ID | WBS | Task | Duration | Start | Finish | Predecessors |
| --- | --- | --- | --- | --- | --- | --- |
| RHD4CZ5L016SL3300 |  | Warning tape and Backfill for Street Lighting Cables for Street Lighting Network - (RD-L-16)-Z5-L016-SL | 5d | 2027-03-03 | 2027-03-08 | RHD4CZ5L016SL3200 |
| RHD4CZ5L016SL3400 |  | Testing of Street Lighting Cables for Street Lighting Network - (RD-L-16)-Z5-L016-SL | 3d | 2027-03-13 | 2027-03-15 | RHD4CZ5L016SL3300 |
|  | 3887 | **RHD4-02-002-L016-(SL)-Street Lighting Poles** |  | 2027-03-16 | 2027-04-11 |  |
| RHD4CZ5L016SL1100 |  | Excavation for RC Base for Lighting Poles for Street Lighting Network - (RD-L-16)-Z5-L016-SL | 4d | 2027-03-16 | 2027-03-20 | RHD4CZ5L016SL2400, RHD4ENSDZ5APPSL170, RHD4CZ5L016SL3400 |
| RHD4CZ5L016SL1200 |  | Installation for RC Base for Lighting Poles for Street Lighting Network - (RD-L-16)-Z5-L016-SL | 4d | 2027-03-21 | 2027-03-24 | RHD4CZ5L016SL1100 |
| RHD4CZ5L016SL1300 |  | Backfill for RC Base for Lighting Poles for Street Lighting Network - (RD-L-16)-Z5-L016-SL | 4d | 2027-03-25 | 2027-03-29 | RHD4CZ5L016SL1200 |
| RHD4CZ5L016SL1400 |  | Installation for Lighting Poles for Street Lighting Network - (RD-L-16)-Z5-L016-SL | 5d | 2027-03-30 | 2027-04-04 | RHD4PRSHLDOSSL1200, RHD4ENMSSL2000, RHD4ENMSSL2010, RHD4PRSHLSTAGSL1200, RHD4CZ5L016SL1300 |
| RHD4CZ5L016SL1500 |  | Luminaire Installation for Lighting Poles for Street Lighting Network - (RD-L-16)-Z5-L016-SL | 4d | 2027-04-07 | 2027-04-11 | RHD4CZ5L016SL1400, RHD4CZ5L016SL6100, RHD4PRSHLDOSSL1300, RHD4PRSHLSTAGSL1300 |
|  | 3889 | **RHD4-02-002-L016-(SL)-Street Lighting Earthing System** |  | 2027-04-05 | 2027-04-06 |  |
| RHD4CZ5L016SL6100 |  | Installation of Earthing for Lighting Poles and Fedder Pillers for Street Lighting Network - (RD-L-16)-Z5-L016-SL | 2d | 2027-04-05 | 2027-04-06 | RHD4CZ5L016SL1400, RHD4ENMSER2000, RHD4ENMSER2010 |
|  | 3895 | **RHD4-02-002-Z5-L016-Telecommunications Network - TC** |  | 2026-07-30 | 2027-05-22 |  |
|  | 3896 | **RHD4-02-002-L016-(TC)-Telecommunications Ducts** |  | 2027-04-12 | 2027-05-22 |  |
| RHD4CZ5L016TC2100 |  | Excavation of HDPE Ducts for Telecom Network - (RD-L-16)-Z5-L016-TC | 9d | 2027-04-12 | 2027-04-21 | RHD4ENSDZ5APPTC190, RHD4CZ5L016SL1500 |
| RHD4CZ5L016TC2200 |  | Installation of HDPE Ducts for Telecom Network - (RD-L-16)-Z5-L016-TC | 13d | 2027-04-22 | 2027-05-06 | RHD4CZ5L016TC2100, RHD4PRSHLDOSTC1000, RHD4PRSHLSTAGTC1000 |
| RHD4CZ5L016TC2400 |  | Backfilling of HDPE Ducts for Telecom Network - (RD-L-16)-Z5-L016-TC | 9d | 2027-05-08 | 2027-05-22 | RHD4CZ5L016TC2200, RHD4CZ5L016TC5200 |
|  | 3897 | **RHD4-02-002-L016-(TC)-Telecommunications Manholes** |  | 2027-04-22 | 2027-05-01 |  |
| RHD4CZ5L016TC5100 |  | Excavation for Manholes for Telecom Network - (RD-L-16)-Z5-L016-TC | 4d | 2027-04-22 | 2027-04-26 | RHD4CZ5L016TC2100, RHD4ENSDZ5APPTC190 |
| RHD4CZ5L016TC5200 |  | Installation of Manholes for Telecom Network - (RD-L-16)-Z5-L016-TC | 4d | 2027-04-27 | 2027-05-01 | RHD4CZ5L016TC5100, RHD4CZ5L016TC2200 SS, RHD4PRSHLDOSTC1200, RHD4PRSHLSTAGTC1200 |
|  | 3898 | **RHD4-02-002-L016-(TC)-Telecomminications Road Crossings** |  | 2026-07-30 | 2026-08-08 |  |
| RHD4CZ5L016TC3100 |  | Excavation for Road Crossings for Telecom Network - (RD-L-16)-Z5-L016-TC | 2d | 2026-07-30 | 2026-08-01 | RHD4ENSDZ5APPTC190, RHD4CZ5L016ST3102 |
| RHD4CZ5L016TC3200 |  | Installation of Road Crossings for Telecom Network - (RD-L-16)-Z5-L016-TC | 2d | 2026-08-02 | 2026-08-03 | RHD4CZ5L016TC3100, RHD4PRSHLDOSTC1100, RHD4PRSHLSTAGTC1100 |
| RHD4CZ5L016TC3300 |  | Pouring of Road Crossings for Telecom Network - (RD-L-16)-Z5-L016-TC | 2d | 2026-08-04 | 2026-08-05 | RHD4CZ5L016TC3200 |
| RHD4CZ5L016TC3400 |  | Backfilling of Road Crossings for Telecom Network - (RD-L-16)-Z5-L016-TC | 2d | 2026-08-06 | 2026-08-08 | RHD4CZ5L016TC3300 |
|  | 3899 | **RHD4-02-002-Z5-L016-Information and Communication Technologies - ICT** |  | 2026-08-02 | 2027-07-07 |  |
|  | 3900 | **RHD4-02-002-L016-(ICT)-Information and Communication Technologies Ducts** |  | 2027-05-23 | 2027-06-28 |  |
| RHD4CZ5L016ICT2100 |  | Excavation of HDPE Ducts for ICT Network - (RD-L-16)-Z5-L016-ICT | 9d | 2027-05-23 | 2027-06-01 | RHD4CZ5L016ICT3400, RHD4ENSDZ5APPICT200, RHD4CZ5L016TC2400 |
| RHD4CZ5L016ICT2200 |  | Installation of HDPE Ducts for ICT Network - (RD-L-16)-Z5-L016-ICT | 14d | 2027-06-02 | 2027-06-17 | RHD4CZ5L016ICT2100, RHD4PRSHLDOSICT1000, RHD4PRSHLSTAGICT1000 |
| RHD4CZ5L016ICT2400 |  | Backfilling of HDPE Ducts for ICT Network - (RD-L-16)-Z5-L016-ICT | 9d | 2027-06-19 | 2027-06-28 | RHD4CZ5L016ICT2200 |
|  | 3901 | **RHD4-02-002-L016-(ICT)-Information and Communication Technologies Manholes** |  | 2027-06-29 | 2027-07-07 |  |
| RHD4CZ5L016ICT5100 |  | Excavation for Manholes for ICT Network - (RD-L-16)-Z5-L016-ICT | 4d | 2027-06-29 | 2027-07-03 | RHD4ENSDZ5APPICT200, RHD4CZ5L016ICT2400 |
| RHD4CZ5L016ICT5200 |  | Installation of Manholes for ICT Network - (RD-L-16)-Z5-L016-ICT | 4d | 2027-07-04 | 2027-07-07 | RHD4CZ5L016ICT5100, RHD4CZ5L016ICT2200 SS, RHD4PRSHLDOSICT1200, RHD4PRSHLSTAGICT1200 |
|  | 3902 | **RHD4-02-002-L016-(ICT)-Information and Communication Technologies Road Crossings** |  | 2026-08-02 | 2026-08-23 |  |
| RHD4CZ5L016ICT3100 |  | Excavation for Road Crossings for ICT Network - (RD-L-16)-Z5-L016-ICT | 2d | 2026-08-02 | 2026-08-03 | RHD4CZ5L016TC3100, RHD4ENSDZ5APPICT200 |
| RHD4CZ5L016ICT3200 |  | Installation of Road Crossings for ICT Network - (RD-L-16)-Z5-L016-ICT | 2d | 2026-08-17 | 2026-08-18 | RHD4CZ5L016ICT3100, RHD4PRSHLDOSICT1100, RHD4PRSHLSTAGICT1100 |
| RHD4CZ5L016ICT3300 |  | Pouring of Road Crossings for ICT Network - (RD-L-16)-Z5-L016-ICT | 2d | 2026-08-19 | 2026-08-20 | RHD4CZ5L016ICT3200 |
| RHD4CZ5L016ICT3400 |  | Backfilling of Road Crossings for ICT Network - (RD-L-16)-Z5-L016-ICT | 2d | 2026-08-22 | 2026-08-23 | RHD4CZ5L016ICT3300 |
|  | 3890 | **RHD4-02-002-Z5-L016-Landscape Network - LS** |  |  |  |  |
|  | 3891 | **RHD4-02-002-L016-(LS)-Landscape Lighting cables** |  |  |  |  |
|  | 3892 | **RHD4-02-002-L016-(LS)-Landscape Feeder Pillars** |  |  |  |  |
|  | 3893 | **RHD4-02-002-L016-(LS)-Landscape Bollard Poles** |  |  |  |  |
|  | 3894 | **RHD4-02-002-L016-(LS)-Landscape Feeder Pillars Earthing** |  |  |  |  |
|  | 3903 | **RHD4-02-002-Z5-L016-Security Network - CCTV** |  | 2027-07-08 | 2027-08-19 |  |
|  | 3904 | **RHD4-02-002-L016-(CCTV)-Civil Works** |  | 2027-07-08 | 2027-07-19 |  |
| RHD4CZ5L016CCTV2100 |  | Civil Works for Security Network - (RD-L-16)-Z5-L016-CCTV | 10d | 2027-07-08 | 2027-07-19 | RHD4CZ5L016ICT5200 |
|  | 3905 | **RHD4-02-002-L016-(CCTV)-CCTV Poles** |  | 2027-07-20 | 2027-07-31 |  |
| RHD4CZ5L016CCTV1100 |  | Excavation for RC Base for CCTV Poles for Security Network - (RD-L-16)-Z5-L016-CCTV | 2d | 2027-07-20 | 2027-07-21 | RHD4CZ5L016CCTV2100, RHD4ENSDZ5APPCCTV210 |
| RHD4CZ5L016CCTV1200 |  | Installation for RC Base for CCTV Poles for Security Network - (RD-L-16)-Z5-L016-CCTV | 2d | 2027-07-22 | 2027-07-24 | RHD4CZ5L016CCTV1100 |
| RHD4CZ5L016CCTV1300 |  | Backfill for RC Base for CCTV Poles for Security Network - (RD-L-16)-Z5-L016-CCTV | 2d | 2027-07-25 | 2027-07-26 | RHD4CZ5L016CCTV1200 |
| RHD4CZ5L016CCTV1400 |  | Installation for CCTV Poles for Security Network - (RD-L-16)-Z5-L016-CCTV | 2d | 2027-07-27 | 2027-07-28 | RHD4CZ5L016CCTV1300, RHD4PRSHLDOSCCTV1000, RHD4PRSHLSTACCTV1000 |
| RHD4CZ5L016CCTV1500 |  | Protection post Installation for CCTV Poles for Security Network - (RD-L-16)-Z5-L016-CCTV | 2d | 2027-07-29 | 2027-07-31 | RHD4CZ5L016CCTV1400 |
|  | 3906 | **RHD4-02-002-L016-(CCTV)-Camera** |  | 2027-08-01 | 2027-08-02 |  |
| RHD4CZ5L016CCTV3100 |  | Installation for Cameras for Security Network - (RD-L-16)-Z5-L016-CCTV | 2d | 2027-08-01 | 2027-08-02 | RHD4CZ5L016CCTV1400, RHD4CZ5L016CCTV4100, RHD4PRSHLDOSCCTV1100, RHD4PRSHLSTACCTV1100, RHD4CZ5L016CCTV1500 |
|  | 3907 | **RHD4-02-002-L016-(CCTV)-Power and Infrastructure** |  | 2027-07-29 | 2027-08-02 |  |
| RHD4CZ5L016CCTV4100 |  | Installation of Power outlet, UPS and midspan for PTZ Camerafor Cameras for Security Network - (RD-L-16)-Z5-L016-CCTV | 2d | 2027-07-29 | 2027-07-31 | RHD4CZ5L016CCTV1400, RHD4PRSHLDOSCCTV1300, RHD4PRSHLSTACCTV1300 |
| RHD4CZ5L016CCTV4200 |  | Short Range Wireless PoP wireless Bridgefor CCTV Poles for Security Network - (RD-L-16)-Z5-L016-CCTV | 2d | 2027-08-01 | 2027-08-02 | RHD4CZ5L016CCTV4100 |
|  | 3909 | **RHD4-02-002-L016-(CCTV)-CCTV Panels and Components** |  | 2027-08-03 | 2027-08-19 |  |
| RHD4CZ5L016CCTV6100 |  | Installation for CCTV Panels for Security Network - (RD-L-16)-Z5-L016-CCTV | 15d | 2027-08-03 | 2027-08-19 | RHD4CZ5L016CCTV4200, RHD4CZ5L016CCTV3100, RHD4PRSHLDOSCCTV1200, RHD4PRSHLSTACCTV1200, RHD4PRLOLSTACCTV1001 |
|  | 3542 | **RHD4-02-002-Z5-A014** |  | 2026-06-13 | 2027-09-30 |  |
|  | 3573 | **RHD4-02-002-Z5-A014-Crossings Sewage Network - SWCr** |  |  |  |  |
|  | 3583 | **RHD4-02-002-A014-(SWCr)-MH Works - 1200 mm diameter** |  |  |  |  |
|  | 3579 | **RHD4-02-002-A014-(SWCr)-UPVC Pipes - 200 mm diameter** |  |  |  |  |
|  | 3617 | **RHD4-02-002-Z5-A014-Crossings Potable Network - PTCr** |  |  |  |  |
|  | 3620 | **RHD4-02-002-A014-(PTCr)-HDPE Pipes - 200 mm diameter** |  |  |  |  |
|  | 3623 | **RHD4-02-002-A014-(PTCr)-Gate Valves (Direct Buried)** |  |  |  |  |
|  | 3630 | **RHD4-02-002-A014-(PTCr)-Fire Hydrant** |  |  |  |  |
|  | 3664 | **RHD4-02-002-Z5-A014-Crossings Irrigation Network - IRRC** |  |  |  |  |
|  | 3665 | **RHD4-02-002-A014-(IRRC)-HDPE Pipes - 160 mm diameter** |  |  |  |  |
|  | 3668 | **RHD4-02-002-A014-(IRRC)-HDPE Pipes - 250 mm diameter** |  |  |  |  |
|  | 3673 | **RHD4-02-002-A014-(IRRC)-Gate Valves (Direct Buried)** |  |  |  |  |
|  | 3678 | **RHD4-02-002-A014-(IRRC)-Air Valve Chamber** |  |  |  |  |

| ID | WBS | Task | Duration | Start | Finish | Predecessors |
| --- | --- | --- | --- | --- | --- | --- |
|  | 3679 | **RHD4-02-002-A014-(IRRC)-Air Valves** |  |  |  |  |
|  | 3721 | **RHD4-02-002-Z5-A014-Road Works - RD** |  | 2026-06-28 | 2027-09-30 |  |
|  | 3722 | **RHD4-02-002-A014-(RD)-Subgrade** |  | 2026-06-28 | 2026-07-02 |  |
| RHD4CZ5A014RD1100 |  | Supply, lay and compaction subgrade compacted thickness 300 mm for Roads - (RD-A-1 /4)-Z5-A014-RD | 5d | 2026-06-28 | 2026-07-02 | RHD4ENSDZ5APPRD220, RHD4ENSDZ5APPEW100 SS, RHD4CZ5A014ST1506, RHD4CZ5A014ST3302 |
|  | 3723 | **RHD4-02-002-A014-(RD)-Aggregate Base Course** |  | 2026-07-04 | 2026-07-09 |  |
| RHD4CZ5A014RD2100 |  | Supply, lay and compaction Aggregate base course compacted thickness 300 mmfor Roads - (RD-A-1 /4)-Z5-A014-RD | 6d | 2026-07-04 | 2026-07-09 | RHD4PRSHLDOSRD1000, RHD4PRSHLSTAGRD1000, RHD4CZ5A014RD1100 |
|  | 3724 | **RHD4-02-002-A014-(RD)-Bituminous base course Two Layers, including (MC1)&(RC2)** |  | 2026-07-11 | 2027-09-06 |  |
| RHD4CZ5A014RD3100 |  | Supply, lay and Asphaltic base course including Prime Coat (MC1) for 1st Layer - (RD-A-1 /4)-Z5-A014-RD | 3d | 2026-07-11 | 2026-07-13 | RHD4PRSHLDOSRD1100, RHD4ENMSASPH2000, RHD4ENMSASPH2010, RHD4PRSHLSTAGRD1100, RHD4CZ5A014RD2100 |
| RHD4CZ5A014RD3200 |  | Supply, lay and Asphaltic base course including Tack Coat (RC2) for 2nd Layer - (RD-A-1 /4)-Z5-A014-RD | 7d | 2027-08-30 | 2027-09-06 | RHD4PRSHLDOSRD1100, RHD4PRSHLSTAGRD1100, RHD4CZ5A014ICT5200 |
|  | 3726 | **RHD4-02-002-A014-(RD)-Precast Concrete Curb** |  | 2027-09-07 | 2027-09-16 |  |
| RHD4CZ5A014RD5100 |  | Supply and installation Precast Concrete Kerb for Roads - (RD-A-1 /4)-Z5-A014-RD | 9d | 2027-09-07 | 2027-09-16 | RHD4CZ5A014RD3200, RHD4PRSHLDOSRD1200, RHD4ENMSRD2000, RHD4ENMSRD2010, RHD4PRSHLSTAGRD1200, RHD4CZ5L016RD5100 |
|  | 3729 | **RHD4-02-002-A014-(RD)-Traffic Signage** |  | 2027-09-18 | 2027-09-26 |  |
| RHD4CZ5A014RD8100 |  | Installation of Traffic Signage for Road Network - (RD-A-1 /4)-Z5-A014-RD | 7d | 2027-09-18 | 2027-09-26 | RHD4CZ5A014RD5100, RHD4PRSHLDOSRD1600, RHD4PRSHLSTAGRD1600, RHD4CZ5L016RD8100, RHD4CZ5A014LV3400, RHD4CZ5C061RD8100 |
|  | 3727 | **RHD4-02-002-A014-(RD)-Precast Interlocking Block Pavers** |  |  |  |  |
|  | 3725 | **RHD4-02-002-A014-(RD)-Bituminous concrete wearing course including tack coat (RC2)** |  | 2027-09-18 | 2027-09-20 |  |
| RHD4CZ5A014RD4100 |  | Supply, lay and compaction Asphaltic wearing course including tack Coat (RC2)for Road Network - (RD-A-1 /4)-Z5-A014-RD | 3d | 2027-09-18 | 2027-09-20 | RHD4CZ5A014RD5100, RHD4CZ5L016RD4100 |
|  | 3730 | **RHD4-02-002-A014-(RD)-Speed Table and Wheel Stopper** |  |  |  |  |
|  | 3728 | **RHD4-02-002-A014-(RD)-Pavement Marking** |  | 2027-09-21 | 2027-09-30 |  |
| RHD4CZ5A014RD7100 |  | Pavement Markings for Road Network - (RD-A-1 /4)-Z5-A014-RD | 8d | 2027-09-21 | 2027-09-30 | RHD4CZ5A014RD4100, RHD4PRSHLDOSRD1500, RHD4PRSHLSTAGRD1500, RHD4CZ5L016RD7100 |
|  | 3546 | **RHD4-02-002-Z5-A014-Storm Network - ST** |  | 2026-06-13 | 2026-08-09 |  |
|  | 2039 | **RHD4-02-002-A014-(ST)-GRP Pipes - 1000 mm diameter** |  | 2026-06-16 | 2026-06-27 |  |
| RHD4CZ5A014ST1106 |  | Excavation works for GRP Pipe Line 1000 mm - (RD-A-1 /4)-Z5-A014-ST | 2d | 2026-06-16 | 2026-06-17 | RHD4CZ5A014ST3102 |
| RHD4CZ5A014ST1206 |  | Bedding works for GRP Pipe Line 1000 mm - (RD-A-1 /4)-Z5-A014-ST | 2d | 2026-06-18 | 2026-06-20 | RHD4CZ5A014ST1106 |
| RHD4CZ5A014ST1306 |  | Installing for GRP Pipe Line 1000 mm - (RD-A-1 /4)-Z5-A014-ST | 2d | 2026-06-21 | 2026-06-22 | RHD4CZ5A014ST1206 |
| RHD4CZ5A014ST1406 |  | Primary Test for GRP Pipe Line 1000 mm - (RD-A-1 /4)-Z5-A014-ST | 2d | 2026-06-23 | 2026-06-24 | RHD4CZ5A014ST1306 |
| RHD4CZ5A014ST1506 |  | Backfilling and warning tape works for GRP Pipe Line 1000 mm - (RD-A-1 /4)-Z5-A014-ST | 2d | 2026-06-25 | 2026-06-27 | RHD4CZ5A014ST1406 |
|  | 2416 | **RHD4-02-002-A014-(ST)-GRP Pipes - 800 mm diameter** |  | 2026-06-18 | 2026-06-29 |  |
| RHD4CZ5A014ST1104 |  | Excavation works for GRP Pipe Line 800 mm - (RD-A-1 /4)-Z5-A014-ST | 2d | 2026-06-18 | 2026-06-20 | RHD4CZ5A014ST1106 |
| RHD4CZ5A014ST1204 |  | Bedding works for GRP Pipe Line 800 mm - (RD-A-1 /4)-Z5-A014-ST | 2d | 2026-06-21 | 2026-06-22 | RHD4CZ5A014ST1104 |
| RHD4CZ5A014ST1304 |  | Installing for GRP Pipe Line 800 mm - (RD-A-1 /4)-Z5-A014-ST | 2d | 2026-06-23 | 2026-06-24 | RHD4CZ5A014ST1204 |
| RHD4CZ5A014ST1404 |  | Primary Test for GRP Pipe Line 800 mm - (RD-A-1 /4)-Z5-A014-ST | 2d | 2026-06-25 | 2026-06-27 | RHD4CZ5A014ST1304 |
| RHD4CZ5A014ST1504 |  | Backfilling and warning tape works for GRP Pipe Line 800 mm - (RD-A-1 /4)-Z5-A014-ST | 2d | 2026-06-28 | 2026-06-29 | RHD4CZ5A014ST1404 |
|  | 3565 | **RHD4-02-002-A014-(ST)-MH Works - 2000 mm diameter** |  | 2026-06-13 | 2026-06-30 |  |
| RHD4CZ5A014ST3102 |  | Excavation and PC Blinding works for MH 2000 mm - (RD-A-1 /4)-Z5-A014-ST | 3d | 2026-06-13 | 2026-06-15 | RHD4ENSDZ5APPST110, RHD4ENMSST2000, RHD4PRSHLDOSST1003 SS, RHD4PRSHLSTAGPT1300, RHD4PRLOLSTAGMV1601, RHD4PRLOLSTAGMV1602 |
| RHD4CZ5A014ST3202 |  | Installation of Base for MH 2000 mm - (RD-A-1 /4)-Z5-A014-ST | 4d | 2026-06-16 | 2026-06-20 | RHD4CZ5A014ST3102, RHD4PRSHLSTAGST1604 |
| RHD4CZ5A014ST3302 |  | MH Ring and C.Slab works and Backfilling works for MH 2000 mm - (RD-A-1 /4)-Z5-A014-ST | 4d | 2026-06-21 | 2026-06-24 | RHD4CZ5A014ST3202, RHD4PRSHLDOSST1604 |
| RHD4CZ5A014ST3402 |  | Steel Cover for MH 2000 mm - (RD-A-1 /4)-Z5-A014-ST | 2d | 2026-06-25 | 2026-06-27 | RHD4CZ5A014ST3302, RHD4PRSHLDOSST1704, RHD4PRSHLSTAGST1704 |
| RHD4CZ5A014ST3502 |  | Finishing, Benching, Testing works for MH 2000 mm - (RD-A-1 /4)-Z5-A014-ST | 3d | 2026-06-28 | 2026-06-30 | RHD4CZ5A014ST3402 |
|  | 3564 | **RHD4-02-002-A014-(ST)-MH Works - 1500 mm diameter** |  | 2026-06-16 | 2026-07-12 |  |
| RHD4CZ5A014ST3101 |  | Excavation and PC Blinding works for MH 1500 mm - (RD-A-1 /4)-Z5-A014-ST | 5d | 2026-06-16 | 2026-06-21 | RHD4CZ5A014ST3102, RHD4ENSDZ5APPST110, RHD4ENMSST2000, RHD4PRLOLSTAGLFS1400 |
| RHD4CZ5A014ST3201 |  | Installation of Base for MH 1500 mm - (RD-A-1 /4)-Z5-A014-ST | 5d | 2026-06-22 | 2026-06-27 | RHD4CZ5A014ST3101, RHD4PRSHLSTAGST1604 |
| RHD4CZ5A014ST3301 |  | MH Ring and C.Slab works and Backfilling works for MH 1500 mm - (RD-A-1 /4)-Z5-A014-ST | 5d | 2026-06-28 | 2026-07-02 | RHD4CZ5A014ST3201, RHD4PRSHLDOSST1604 |
| RHD4CZ5A014ST3401 |  | Steel Cover for MH 1500 mm - (RD-A-1 /4)-Z5-A014-ST | 3d | 2026-07-04 | 2026-07-06 | RHD4CZ5A014ST3301, RHD4PRSHLDOSST1704, RHD4PRSHLSTAGST1704, RHD4CZ5A014ST3402 |
| RHD4CZ5A014ST3501 |  | Finishing, Benching, Testing works for MH 1500 mm - (RD-A-1 /4)-Z5-A014-ST | 5d | 2026-07-07 | 2026-07-12 | RHD4CZ5A014ST3401 |
|  | 3563 | **RHD4-02-002-A014-(ST)-MH Works - 1200 mm diameter** |  | 2026-06-22 | 2026-07-11 |  |
| RHD4CZ5A014ST3100 |  | Excavation and PC Blinding works for MH 1200 mm - (RD-A-1 /4)-Z5-A014-ST | 4d | 2026-06-22 | 2026-06-25 | RHD4CZ5A014ST3101, RHD4ENSDZ5APPST110, RHD4ENMSST2000, RHD4ENMSST2010, RHD4PRSHLSTAGST1002, RHD4PRSHLSTAGST1008, RHD4PRSHLSTAGIRR1400, RHD4PRSHLSTAGIRR1300 |
| RHD4CZ5A014ST3200 |  | Installation of Base for MH 1200 mm - (RD-A-1 /4)-Z5-A014-ST | 4d | 2026-06-27 | 2026-06-30 | RHD4CZ5A014ST3100, RHD4PRSHLSTAGST1604, RHD4PRLOLSTAGLFS2000, RHD4PRLOLSTAGLFS1000, RHD4PRLOLSTAGLFS1200, RHD4PRLOLSTAGLFS1500, RHD4CZ6A015RW3000, RHD4PRSHLSTAGLV1400 |
| RHD4CZ5A014ST3300 |  | MH Ring and C.Slab works and Backfilling works for MH 1200 mm - (RD-A-1 /4)-Z5-A014-ST | 4d | 2026-07-01 | 2026-07-05 | RHD4CZ5A014ST3200, RHD4PRSHLDOSST1604, RHD4PRSHLSTAGSL1400 |
| RHD4CZ5A014ST3500 |  | Finishing, Benching, Testing works for MH 1200 mm - (RD-A-1 /4)-Z5-A014-ST | 4d | 2026-07-01 | 2026-07-05 | RHD4CZ5A014ST3502 |
| RHD4CZ5A014ST3400 |  | Steel Cover for MH 1200 mm - (RD-A-1 /4)-Z5-A014-ST | 4d | 2026-07-07 | 2026-07-11 | RHD4CZ5A014ST3300, RHD4PRSHLDOSST1704, RHD4PRSHLSTAGST1704, RHD4CZ5A014ST3401, RHD4CZ5A014ST3500 |
|  | 3558 | **RHD4-02-002-A014-(ST)-GRP Pipes - 1500 mm diameter** |  | 2026-07-01 | 2026-07-12 |  |
| RHD4CZ5A014ST1111 |  | Excavation works for GRP Pipe Line 1500 mm - (RD-A-1 /4)-Z5-A014-ST | 2d | 2026-07-01 | 2026-07-02 | RHD4CZ5A014ST3202, RHD4CZ5A014ST3201, RHD4CZ5A014ST3200, RHD4ENSDZ5APPST110, RHD4CZ5A014ST1506 |
| RHD4CZ5A014ST1211 |  | Bedding works for GRP Pipe Line 1500 mm - (RD-A-1 /4)-Z5-A014-ST | 2d | 2026-07-04 | 2026-07-05 | RHD4CZ5A014ST1111 |
| RHD4CZ5A014ST1311 |  | Installing for GRP Pipe Line 1500 mm - (RD-A-1 /4)-Z5-A014-ST | 2d | 2026-07-06 | 2026-07-07 | RHD4CZ5A014ST1211, RHD4CZ5A014ST3302, RHD4CZ5A014ST3301, RHD4CZ5A014ST3300, RHD4PRSHLSTAGST1004 |
| RHD4CZ5A014ST1411 |  | Primary Test for GRP Pipe Line 1500 mm - (RD-A-1 /4)-Z5-A014-ST | 2d | 2026-07-08 | 2026-07-09 | RHD4CZ5A014ST1311 |
| RHD4CZ5A014ST1511 |  | Backfilling and warning tape works for GRP Pipe Line 1500 mm - (RD-A-1 /4)-Z5-A014-ST | 2d | 2026-07-11 | 2026-07-12 | RHD4CZ5A014ST1411, RHD4CZ5A014ST1504 |
|  | 3555 | **RHD4-02-002-A014-(ST)-GRP Pipes - 1200 mm diameter** |  |  |  |  |
|  | 3554 | **RHD4-02-002-A014-(ST)-GRP Pipes - 1100 mm diameter** |  |  |  |  |
|  | 3550 | **RHD4-02-002-A014-(ST)-GRP Pipes - 700 mm diameter** |  | 2026-07-04 | 2026-07-18 |  |
| RHD4CZ5A014ST1103 |  | Excavation works for GRP Pipe Line 700 mm - (RD-A-1 /4)-Z5-A014-ST | 3d | 2026-07-04 | 2026-07-06 | RHD4ENSDZ5APPST110, RHD4CZ5A014ST1111 |
| RHD4CZ5A014ST1203 |  | Bedding works for GRP Pipe Line 700 mm - (RD-A-1 /4)-Z5-A014-ST | 3d | 2026-07-07 | 2026-07-09 | RHD4CZ5A014ST1103 |
| RHD4CZ5A014ST1303 |  | Installing for GRP Pipe Line 700 mm - (RD-A-1 /4)-Z5-A014-ST | 2d | 2026-07-11 | 2026-07-12 | RHD4CZ5A014ST1203, RHD4PRSHLSTAGST1004, RHD4PRSHLDOSST1604, RHD4PRSHLPOST1000, RHD4PRSHLDOSST1004 |
| RHD4CZ5A014ST1403 |  | Primary Test for GRP Pipe Line 700 mm - (RD-A-1 /4)-Z5-A014-ST | 2d | 2026-07-13 | 2026-07-14 | RHD4CZ5A014ST1303 |
| RHD4CZ5A014ST1503 |  | Backfilling and warning tape works for GRP Pipe Line 700 mm - (RD-A-1 /4)-Z5-A014-ST | 3d | 2026-07-15 | 2026-07-18 | RHD4CZ5A014ST1403 |
|  | 3549 | **RHD4-02-002-A014-(ST)-GRP Pipes - 600 mm diameter** |  | 2026-07-07 | 2026-07-20 |  |
| RHD4CZ5A014ST1102 |  | Excavation works for GRP Pipe Line 600 mm - (RD-A-1 /4)-Z5-A014-ST | 2d | 2026-07-07 | 2026-07-08 | RHD4CZ5A014ST1103, RHD4ENSDZ5APPST110 |
| RHD4CZ5A014ST1202 |  | Bedding works for GRP Pipe Line 600 mm - (RD-A-1 /4)-Z5-A014-ST | 2d | 2026-07-09 | 2026-07-11 | RHD4CZ5A014ST1102 |
| RHD4CZ5A014ST1302 |  | Installing for GRP Pipe Line 600 mm - (RD-A-1 /4)-Z5-A014-ST | 2d | 2026-07-12 | 2026-07-13 | RHD4CZ5A014ST1202, RHD4PRSHLSTAGST1004, RHD4PRSHLDOSST1604, RHD4PRSHLPOST1000, RHD4PRSHLDOSST1004 |
| RHD4CZ5A014ST1402 |  | Primary Test for GRP Pipe Line 600 mm - (RD-A-1 /4)-Z5-A014-ST | 2d | 2026-07-14 | 2026-07-15 | RHD4CZ5A014ST1302 |
| RHD4CZ5A014ST1502 |  | Backfilling and warning tape works for GRP Pipe Line 600 mm - (RD-A-1 /4)-Z5-A014-ST | 2d | 2026-07-19 | 2026-07-20 | RHD4CZ5A014ST1402, RHD4CZ5A014ST1503 |

| ID | WBS | Task | Duration | Start | Finish | Predecessors |
| --- | --- | --- | --- | --- | --- | --- |
|  | 3548 | **RHD4-02-002-A014-(ST)-GRP Pipes - 500 mm diameter** |  | 2026-07-09 | 2026-07-20 |  |
| RHD4CZ5A014ST1101 |  | Excavation works for GRP Pipe Line 500 mm - (RD-A-1 /4)-Z5-A014-ST | 2d | 2026-07-09 | 2026-07-11 | RHD4CZ5A014ST1102, RHD4ENSDZ5APPST110 |
| RHD4CZ5A014ST1201 |  | Bedding works for GRP Pipe Line 500 mm - (RD-A-1 /4)-Z5-A014-ST | 2d | 2026-07-12 | 2026-07-13 | RHD4CZ5A014ST1101 |
| RHD4CZ5A014ST1301 |  | Installing for GRP Pipe Line 500 mm - (RD-A-1 /4)-Z5-A014-ST | 2d | 2026-07-14 | 2026-07-15 | RHD4CZ5A014ST1201, RHD4PRSHLSTAGST1004, RHD4PRSHLDOSST1604, RHD4PRSHLPOST1000, RHD4PRSHLDOSST1004 |
| RHD4CZ5A014ST1401 |  | Primary Test for GRP Pipe Line 500 mm - (RD-A-1 /4)-Z5-A014-ST | 2d | 2026-07-16 | 2026-07-18 | RHD4CZ5A014ST1301 |
| RHD4CZ5A014ST1501 |  | Backfilling and warning tape works for GRP Pipe Line 500 mm - (RD-A-1 /4)-Z5-A014-ST | 2d | 2026-07-19 | 2026-07-20 | RHD4CZ5A014ST1401, RHD4CZ5A014ST1511 |
|  | 3547 | **RHD4-02-002-A014-(ST)-GRP Pipes - 400 mm diameter** |  | 2026-07-12 | 2026-07-22 |  |
| RHD4CZ5A014ST1100 |  | Excavation works for GRP Pipe Line 400 mm - (RD-A-1 /4)-Z5-A014-ST | 2d | 2026-07-12 | 2026-07-13 | RHD4CZ5A014ST1101, RHD4ENSDZ5APPST110 |
| RHD4CZ5A014ST1200 |  | Bedding works for GRP Pipe Line 400 mm - (RD-A-1 /4)-Z5-A014-ST | 2d | 2026-07-14 | 2026-07-15 | RHD4CZ5A014ST1100 |
| RHD4CZ5A014ST1300 |  | Installing for GRP Pipe Line 400 mm - (RD-A-1 /4)-Z5-A014-ST | 2d | 2026-07-16 | 2026-07-18 | RHD4CZ5A014ST1200, RHD4PRSHLSTAGST1004, RHD4PRSHLDOSST1604, RHD4PRSHLPOST1000, RHD4PRSHLDOSST1004 |
| RHD4CZ5A014ST1400 |  | Primary Test for GRP Pipe Line 400 mm - (RD-A-1 /4)-Z5-A014-ST | 2d | 2026-07-19 | 2026-07-20 | RHD4CZ5A014ST1300 |
| RHD4CZ5A014ST1500 |  | Backfilling and warning tape works for GRP Pipe Line 400 mm - (RD-A-1 /4)-Z5-A014-ST | 2d | 2026-07-21 | 2026-07-22 | RHD4CZ5A014ST1400, RHD4CZ5A014ST1501 |
|  | 3562 | **RHD4-02-002-A014-(ST)-UPVC Pipes - 400 mm diameter** |  | 2026-07-06 | 2026-07-25 |  |
| RHD4CZ5A014ST2101 |  | Excavation works for UPVC Pipe Line 400 mm - (RD-A-1 /4)-Z5-A014-ST | 2d | 2026-07-06 | 2026-07-07 | RHD4CZ5A014ST3300, RHD4CZ5A014ST3301, RHD4ENSDZ5APPST110 |
| RHD4CZ5A014ST2201 |  | Bedding works for UPVC Pipe Line 400 mm - (RD-A-1 /4)-Z5-A014-ST | 2d | 2026-07-08 | 2026-07-09 | RHD4CZ5A014ST2101 |
| RHD4CZ5A014ST2301 |  | Installing for UPVC Pipe Line 400 mm - (RD-A-1 /4)-Z5-A014-ST | 2d | 2026-07-11 | 2026-07-12 | RHD4CZ5A014ST2201, RHD4PRSHLDOSST1104, RHD4PRSHLSTAGST1104 |
| RHD4CZ5A014ST2401 |  | Primary Test for UPVC Pipe Line 400 mm - (RD-A-1 /4)-Z5-A014-ST | 2d | 2026-07-13 | 2026-07-14 | RHD4CZ5A014ST2301 |
| RHD4CZ5A014ST2501 |  | Backfilling and warning tape works for UPVC Pipe Line 400 mm - (RD-A-1 /4)-Z5-A014-ST | 2d | 2026-07-23 | 2026-07-25 | RHD4CZ5A014ST2401, RHD4CZ5A014ST6100 |
|  | 3561 | **RHD4-02-002-A014-(ST)-UPVC Pipes - 300 mm diameter** |  | 2026-07-08 | 2026-08-09 |  |
| RHD4CZ5A014ST2100 |  | Excavation works for UPVC Pipe Line 300 mm - (RD-A-1 /4)-Z5-A014-ST | 6d | 2026-07-08 | 2026-07-14 | RHD4CZ5A014ST2101, RHD4CZ5A014ST3300, RHD4CZ5A014ST3301, RHD4ENSDZ5APPST110 |
| RHD4CZ5A014ST2200 |  | Bedding works for UPVC Pipe Line 300 mm - (RD-A-1 /4)-Z5-A014-ST | 5d | 2026-07-15 | 2026-07-20 | RHD4CZ5A014ST2100, RHD4CZ5A014ST2201 |
| RHD4CZ5A014ST2300 |  | Installing for UPVC Pipe Line 300 mm - (RD-A-1 /4)-Z5-A014-ST | 6d | 2026-07-21 | 2026-07-27 | RHD4CZ5A014ST2200, RHD4CZ5A014ST2301, RHD4PRSHLDOSST1104, RHD4PRSHLSTAGST1104 |
| RHD4CZ5A014ST2400 |  | Primary Test for UPVC Pipe Line 300 mm - (RD-A-1 /4)-Z5-A014-ST | 4d | 2026-07-28 | 2026-08-01 | RHD4CZ5A014ST2300, RHD4CZ5A014ST2401 |
| RHD4CZ5A014ST2500 |  | Backfilling and warning tape works for UPVC Pipe Line 300 mm - (RD-A-1 /4)-Z5-A014-ST | 7d | 2026-08-02 | 2026-08-09 | RHD4CZ5A014ST2400, RHD4CZ5A014ST2501, RHD4CZ5A014ST6100, RHD4CZ5A014ST5401 |
|  | 3566 | **RHD4-02-002-A014-(ST)-Discharge Chamber - 1500*1200 mm** |  | 2026-07-19 | 2026-07-27 |  |
| RHD4CZ5A014ST5101 |  | Excavation+Bedding for Discharge Chamber With GRP 800 mm Dia - 1500*1200 mm - (RD-A-1 /4)-Z5-A014-ST | 2d | 2026-07-19 | 2026-07-20 | RHD4CZ5A014ST1300, RHD4ENSDZ5APPST110, RHD4ENMSEW2000, RHD4ENMSEW2010, RHD4ENSDZ7APPEW100 SS |
| RHD4CZ5A014ST5201 |  | PC works for Discharge Chamber With GRP 800 mm Dia - 1500*1200 mm - (RD-A-1 /4)-Z5-A014-ST | 2d | 2026-07-21 | 2026-07-22 | RHD4CZ5A014ST5101 |
| RHD4CZ5A014ST5301 |  | Installation for Discharge Chamber With GRP 800 mm Dia - 1500*1200 mm - (RD-A-1 /4)-Z5-A014-ST | 2d | 2026-07-23 | 2026-07-25 | RHD4CZ5A014ST5201 |
| RHD4CZ5A014ST5401 |  | Backfilling works for Discharge Chamber With GRP 800 mm Dia - 1500*1200 mm - (RD-A-1 /4)-Z5-A014-ST | 2d | 2026-07-26 | 2026-07-27 | RHD4CZ5A014ST5301, RHD4CZ5A014ST1500 |
|  | 3567 | **RHD4-02-002-A014-(ST)-HDPE Force Main Pipeline - 200 mm diameter** |  | 2026-07-21 | 2026-08-01 |  |
| RHD4CZ5A014ST9100 |  | Excavation works for HDPE Force Main Pipeline 200 mm - (RD-A-1 /4)-Z5-A014-ST | 2d | 2026-07-21 | 2026-07-22 | RHD4ENSDZ5APPST110, RHD4CZ5A014ST5101, RHD4CZ5A014RD3100 |
| RHD4CZ5A014ST9200 |  | Bedding works for HDPE Force Main Pipeline 200 mm - (RD-A-1 /4)-Z5-A014-ST | 2d | 2026-07-23 | 2026-07-25 | RHD4CZ5A014ST9100 |
| RHD4CZ5A014ST9300 |  | Installing for HDPE Force Main Pipeline 200 mm - (RD-A-1 /4)-Z5-A014-ST | 2d | 2026-07-26 | 2026-07-27 | RHD4CZ5A014ST9200, RHD4CZ7C02ST4600 |
| RHD4CZ5A014ST9400 |  | Primary Test for HDPE Force Main Pipeline 200 mm - (RD-A-1 /4)-Z5-A014-ST | 2d | 2026-07-28 | 2026-07-29 | RHD4CZ5A014ST9300 |
| RHD4CZ5A014ST9500 |  | Backfilling and warning tape works for HDPE Force Main Pipeline 200 mm - (RD-A-1 /4)-Z5-A014-ST | 2d | 2026-07-30 | 2026-08-01 | RHD4CZ5A014ST9400 |
|  | 3569 | **RHD4-02-002-A014-(ST)-Concrete Encasement** |  | 2026-07-21 | 2026-07-22 |  |
| RHD4CZ5A014ST6100 |  | Pipe Encasement for Storm Pipelines - (RD-A-1 /4)-Z5-A014-ST | 2d | 2026-07-21 | 2026-07-22 | RHD4CZ5A014ST2201, RHD4CZ5A014ST2200 |
|  | 3570 | **RHD4-02-002-Z5-A014-Catch Basin - ST** |  | 2026-07-06 | 2026-08-13 |  |
|  | 3571 | **RHD4-02-002-A014-(ST)-Single Catch Basin Works** |  | 2026-07-06 | 2026-08-11 |  |
| RHD4CZ5A014ST7100 |  | Excavation works for Single Catch Basin - (RD-A-1 /4)-Z5-A014-ST | 5d | 2026-07-06 | 2026-07-11 | RHD4CZ5A014ST3300, RHD4CZ5A014ST3301, RHD4ENSDZ5APPST110 |
| RHD4CZ5A014ST7200 |  | PC Blinding, Installation and Pipe connection for Single Catch Basin - (RD-A-1 /4)-Z5-A014-ST | 5d | 2026-07-12 | 2026-07-16 | RHD4CZ5A014ST7100 |
| RHD4CZ5A014ST7300 |  | Rings & C.Slab & Final Backfill for Single Catch Basin - (RD-A-1 /4)-Z5-A014-ST | 7d | 2026-07-18 | 2026-07-25 | RHD4CZ5A014ST7200 |
| RHD4CZ5A014ST7400 |  | Steel Cover for Single Catch Basin - (RD-A-1 /4)-Z5-A014-ST | 5d | 2026-07-26 | 2026-07-30 | RHD4CZ5A014ST7300, RHD4PRSHLDOSST1704 |
| RHD4CZ5A014ST7500 |  | Finishing and Insulation works for Single Catch Basin - (RD-A-1 /4)-Z5-A014-ST | 10d | 2026-08-01 | 2026-08-11 | RHD4CZ5A014ST7400 |
|  | 3572 | **RHD4-02-002-A014-(ST)-Double Catch Basin Works** |  | 2026-07-12 | 2026-08-13 |  |
| RHD4CZ5A014ST8100 |  | Excavation works for Double Catch Basin - (RD-A-1 /4)-Z5-A014-ST | 2d | 2026-07-12 | 2026-07-13 | RHD4CZ5A014ST3300, RHD4CZ5A014ST3301, RHD4ENSDZ5APPST110, RHD4CZ5A014ST7100 |
| RHD4CZ5A014ST8200 |  | PC Blinding, Installation and Pipe connection for Double Catch Basin - (RD-A-1 /4)-Z5-A014-ST | 2d | 2026-07-18 | 2026-07-19 | RHD4CZ5A014ST8100, RHD4CZ5A014ST7200 |
| RHD4CZ5A014ST8300 |  | Rings & C.Slab & Final Backfillfor Double Catch Basin - (RD-A-1 /4)-Z5-A014-ST | 2d | 2026-07-26 | 2026-07-27 | RHD4CZ5A014ST8200, RHD4PRSHLDOSST1304, RHD4CZ5A014ST7300, RHD4PRSHLSTAGST1304 |
| RHD4CZ5A014ST8400 |  | Steel Cover for Double Catch Basin - (RD-A-1 /4)-Z5-A014-ST | 2d | 2026-07-28 | 2026-07-29 | RHD4CZ5A014ST8300, RHD4CZ5A014ST7400 SS, RHD4PRSHLDOSST1704 |
| RHD4CZ5A014ST8500 |  | Finishing and Insulation works for Double Catch Basin - (RD-A-1 /4)-Z5-A014-ST | 2d | 2026-08-12 | 2026-08-13 | RHD4CZ5A014ST8400, RHD4CZ5A014ST7500 |
|  | 3595 | **RHD4-02-002-Z5-A014-Sewage Network - SW** |  | 2026-08-10 | 2026-08-27 |  |
|  | 4361 | **RHD4-02-002-A014-(SW)-MH Works - 1200 mm diameter** |  | 2026-08-12 | 2026-08-27 |  |
| RHD4CZ5A014SW3100 |  | Excavation and PC Blinding works for MH 1200 mm - (RD-A-1 /4)-Z5-A014-SW | 3d | 2026-08-12 | 2026-08-15 | RHD4CZ5A014SW2100, RHD4CZ5A014ST2500 |
| RHD4CZ5A014SW3200 |  | Installation of Base for MH 1200 mm - (RD-A-1 /4)-Z5-A014-SW | 3d | 2026-08-16 | 2026-08-18 | RHD4CZ5A014SW3100 |
| RHD4CZ5A014SW3300 |  | MH Ring and C.Slab works and Backfilling works for MH 1200 mm - (RD-A-1 /4)-Z5-A014-SW | 3d | 2026-08-19 | 2026-08-22 | RHD4CZ5A014SW3200 |
| RHD4CZ5A014SW3400 |  | Steel Cover for MH 1200 mm - (RD-A-1 /4)-Z5-A014-SW | 2d | 2026-08-23 | 2026-08-24 | RHD4CZ5A014SW3300 |
| RHD4CZ5A014SW3500 |  | Finishing, Benching, Testing works for MH 1200 mm - (RD-A-1 /4)-Z5-A014-SW | 3d | 2026-08-25 | 2026-08-27 | RHD4CZ5A014SW3400 |
|  | 3601 | **RHD4-02-002-A014-(SW)-UPVC Pipes - 200 mm diameter** |  | 2026-08-10 | 2026-08-20 |  |
| RHD4CZ5A014SW2100 |  | Excavation works for UPVC Pipe Line 200 mm - (RD-A-1 /4)-Z5-A014-SW | 2d | 2026-08-10 | 2026-08-11 | RHD4ENSDZ5APPSW120, RHD4CZ5A014ST3101, RHD4CZ5A014ST2500 |
| RHD4CZ5A014SW2200 |  | Bedding works for UPVC Pipe Line 200 mm - (RD-A-1 /4)-Z5-A014-SW | 2d | 2026-08-12 | 2026-08-13 | RHD4CZ5A014SW2100 |
| RHD4CZ5A014SW2300 |  | Installing for UPVC Pipe Line 200 mm - (RD-A-1 /4)-Z5-A014-SW | 2d | 2026-08-15 | 2026-08-16 | RHD4CZ5A014SW2200, RHD4PRSHLPOSW1000, RHD4PRSHLDOSSW1004, RHD4PRSHLDOSSW1304, RHD4PRSHLPOSW1100, RHD4PRSHLDOSSW1104 |
| RHD4CZ5A014SW2400 |  | Primary Test for UPVC Pipe Line 200 mm - (RD-A-1 /4)-Z5-A014-SW | 2d | 2026-08-17 | 2026-08-18 | RHD4CZ5A014SW2300 |
| RHD4CZ5A014SW2500 |  | Backfilling and warning tape works for UPVC Pipe Line 200 mm - (RD-A-1 /4)-Z5-A014-SW | 2d | 2026-08-19 | 2026-08-20 | RHD4CZ5A014SW2400 |
|  | 3604 | **RHD4-02-002-A014-(SW)-Concrete Encasement** |  |  |  |  |
|  | 3632 | **RHD4-02-002-Z5-A014-Potable Network - PT** |  | 2026-08-22 | 2026-10-05 |  |
|  | 3635 | **RHD4-02-002-A014-(PT)-HDPE Pipes - 200 mm diameter** |  | 2026-08-22 | 2026-09-19 |  |
| RHD4CZ5A014PT1102 |  | Excavation works for HDPE Pipline 200 mm - (RD-A-1 /4)-Z5-A014-PT | 5d | 2026-08-22 | 2026-08-26 | RHD4CZ5A014SW2500, RHD4ENSDZ5APPPT130, RHD4ENMSPT2000, RHD4CZ5A014ST9500, RHD4CZ5A014ST1502 |
| RHD4CZ5A014PT1202 |  | Bedding works for HDPE Pipline 200 mm - (RD-A-1 /4)-Z5-A014-PT | 4d | 2026-08-27 | 2026-08-31 | RHD4CZ5A014PT1102 |
| RHD4CZ5A014PT1302 |  | Installing for HDPE Pipline 200 mm - (RD-A-1 /4)-Z5-A014-PT | 7d | 2026-09-01 | 2026-09-08 | RHD4CZ5A014PT1202, RHD4PRSHLDOSPT1000, RHD4PRSHLSTAGPT1000 |
| RHD4CZ5A014PT1402 |  | Primary Test for HDPE Pipline 200 mm - (RD-A-1 /4)-Z5-A014-PT | 3d | 2026-09-09 | 2026-09-12 | RHD4CZ5A014PT1302 |

| ID | WBS | Task | Duration | Start | Finish | Predecessors |
| --- | --- | --- | --- | --- | --- | --- |
| RHD4CZ5A014PT1502 |  | Backfilling and warning tape works for HDPE Pipline 200 mm - (RD-A-1 /4)-Z5-A014-PT | 6d | 2026-09-13 | 2026-09-19 | RHD4CZ5A014PT1402 |
|  | 2692 | **RHD4-02-002-A014-(PT)-Gate Valves (Direct Buried)** |  | 2026-09-09 | 2026-09-13 |  |
| RHD4CZ5A014PT3100 |  | Installation for Direct Buried Gate Valves - (RD-A-1 /4)-Z5-A014-PT | 2d | 2026-09-09 | 2026-09-10 | RHD4CZ5A014PT1302 |
| RHD4CZ5A014PT3200 |  | Stem and Service box for Direct Buried Gate Valves - (RD-A-1 /4)-Z5-A014-PT | 2d | 2026-09-12 | 2026-09-13 | RHD4CZ5A014PT3100 |
|  | 3642 | **RHD4-02-002-A014-(PT)-Wash out Valves** |  | 2026-09-28 | 2026-10-05 |  |
| RHD4CZ5A014PT3102 |  | Installation for Wash out Valves for Potable Water Network - (RD-A-1 /4)-Z5-A014-PT | 2d | 2026-09-28 | 2026-09-29 | RHD4CZ5A014PT2301, RHD4PRSHLDOSPT1200, RHD4PRSHLSTAGPT1200, RHD4CZ5A014SW3500 |
| RHD4CZ5A014PT3202 |  | Stem and Service box for Wash out Valves for Potable Water Network - (RD-A-1 /4)-Z5-A014-PT | 2d | 2026-10-04 | 2026-10-05 | RHD4CZ5A014PT3102, RHD4CZ5A014PT2401, RHD4PRSHLDOSPT1300, RHD4PRSHLSTAGPT1300, RHD4CZ5A014LV2400, RHD4CZ5A014SL2400 |
|  | 3643 | **RHD4-02-002-A014-(PT)-Air Valve Chambers** |  | 2026-09-20 | 2026-09-29 |  |
| RHD4CZ5A014PT2102 |  | Excavation and Bedding for Air Valve Chambers for Potable Water Network - (RD-A-1 /4)-Z5-A014-PT | 2d | 2026-09-20 | 2026-09-21 | RHD4CZ5A014PT1502, RHD4ENSDZ5APPPT130 |
| RHD4CZ5A014PT2202 |  | PC works for Air Valve Chambers for Potable Water Network - (RD-A-1 /4)-Z5-A014-PT | 2d | 2026-09-22 | 2026-09-24 | RHD4CZ5A014PT2102 |
| RHD4CZ5A014PT2302 |  | Installation for Air Valve Chambers for Potable Water Network - (RD-A-1 /4)-Z5-A014-PT | 2d | 2026-09-26 | 2026-09-27 | RHD4CZ5A014PT2202, RHD4PRSHLDOSPT1100, RHD4PRSHLDOSPT1400, RHD4PRSHLSTAGPT1100, RHD4PRSHLSTAGPT1400 |
| RHD4CZ5A014PT2402 |  | Backfilling works for Air Valve Chambers for Potable Water Network - (RD-A-1 /4)-Z5-A014-PT | 2d | 2026-09-28 | 2026-09-29 | RHD4CZ5A014PT2302 |
|  | 3644 | **RHD4-02-002-A014-(PT)-Air Valves** |  | 2026-09-28 | 2026-10-03 |  |
| RHD4CZ5A014PT3103 |  | Installation for Air Valves for Potable Water Network - (RD-A-1 /4)-Z5-A014-PT | 2d | 2026-09-28 | 2026-09-29 | RHD4CZ5A014PT2302, RHD4PRSHLDOSPT1200, RHD4PRSHLSTAGPT1200 |
| RHD4CZ5A014PT3203 |  | Stem and Service box for Air Valves for Potable Water Network - (RD-A-1 /4)-Z5-A014-PT | 3d | 2026-09-30 | 2026-10-03 | RHD4CZ5A014PT3103, RHD4CZ5A014PT2402, RHD4PRSHLDOSPT1300, RHD4PRSHLSTAGPT1300, RHD4CZ5A014IRR1503 |
|  | 3645 | **RHD4-02-002-A014-(PT)-Fire Hydrant** |  | 2026-09-20 | 2026-10-03 |  |
| RHD4CZ5A014PT4100 |  | Excavation and Bedding and Pipe Installation for Fire Hydrant - (RD-A-1 /4)-Z5-A014-PT | 3d | 2026-09-20 | 2026-09-22 | RHD4CZ5A014PT1502, RHD4ENSDZ5APPPT130 |
| RHD4CZ5A014PT4200 |  | Valve Installation for Fire Hydrant - (RD-A-1 /4)-Z5-A014-PT | 2d | 2026-09-24 | 2026-09-26 | RHD4CZ5A014PT4100 |
| RHD4CZ5A014PT4300 |  | Stem for Fire Hydrant - (RD-A-1 /4)-Z5-A014-PT | 2d | 2026-09-27 | 2026-09-28 | RHD4CZ5A014PT4200 |
| RHD4CZ5A014PT4400 |  | Fire Installation for Fire Hydrant - (RD-A-1 /4)-Z5-A014-PT | 2d | 2026-09-29 | 2026-09-30 | RHD4CZ5A014PT4300, RHD4PRSHLDOSPT1500, RHD4PRSHLSTAGPT1500 |
| RHD4CZ5A014PT4500 |  | Protection Barriers for Fire Hydrant - (RD-A-1 /4)-Z5-A014-PT | 2d | 2026-10-01 | 2026-10-03 | RHD4CZ5A014PT4400 |
|  | 3646 | **RHD4-02-002-A014-(PT)-Concrete Encasement** |  |  |  |  |
|  | 3641 | **RHD4-02-002-A014-(PT)-Wash out Valve Chambers** |  | 2026-09-20 | 2026-10-03 |  |
| RHD4CZ5A014PT2101 |  | Excavation and Bedding for Wash out Valve Chambers for Potable Water Network - (RD-A-1 /4)-Z5-A014-PT | 2d | 2026-09-20 | 2026-09-21 | RHD4CZ5A014PT1502, RHD4ENSDZ5APPPT130, RHD4CZ5A014PT1502 FF, RHD4CZ5A014PT3200 |
| RHD4CZ5A014PT2201 |  | PC works for Wash out Valve Chambers for Potable Water Network - (RD-A-1 /4)-Z5-A014-PT | 2d | 2026-09-22 | 2026-09-24 | RHD4CZ5A014PT2101 |
| RHD4CZ5A014PT2301 |  | Installation for Wash out Valve Chambers for Potable Water Network - (RD-A-1 /4)-Z5-A014-PT | 2d | 2026-09-26 | 2026-09-27 | RHD4CZ5A014PT2201, RHD4PRSHLDOSPT1100, RHD4PRSHLDOSPT1400, RHD4PRSHLSTAGPT1100, RHD4PRSHLSTAGPT1400 |
| RHD4CZ5A014PT2401 |  | Backfilling works for Wash out Valve Chambers for Potable Water Network - (RD-A-1 /4)-Z5-A014-PT | 5d | 2026-09-28 | 2026-10-03 | RHD4CZ5A014PT2301 |
|  | 3647 | **RHD4-02-002-Z5-A014-Irrigation Network - IRR** |  | 2026-08-27 | 2026-09-29 |  |
|  | 3651 | **RHD4-02-002-A014-(IRR)-HDPE Pipes - 250 mm diameter** |  | 2026-08-27 | 2026-09-29 |  |
| RHD4CZ5A014IRR1103 |  | Excavation works for HDPE Pipline 250 mm - (RD-A-1 /4)-Z5-A014-IRR | 4d | 2026-08-27 | 2026-08-31 | RHD4ENSDZ5APPIRR140, RHD4ENMSRR2000, RHD4CZ5A014PT1102 |
| RHD4CZ5A014IRR1203 |  | Bedding works for HDPE Pipline 250 mm - (RD-A-1 /4)-Z5-A014-IRR | 6d | 2026-09-01 | 2026-09-07 | RHD4CZ5A014IRR1103 |
| RHD4CZ5A014IRR1303 |  | Installing for HDPE Pipline 250 mm - (RD-A-1 /4)-Z5-A014-IRR | 7d | 2026-09-08 | 2026-09-15 | RHD4CZ5A014IRR1203 |
| RHD4CZ5A014IRR1403 |  | Primary Test for HDPE Pipline 250 mm - (RD-A-1 /4)-Z5-A014-IRR | 3d | 2026-09-16 | 2026-09-19 | RHD4CZ5A014IRR1303 |
| RHD4CZ5A014IRR1503 |  | Backfilling and warning tape works for HDPE Pipline 250 mm - (RD-A-1 /4)-Z5-A014-IRR | 8d | 2026-09-20 | 2026-09-29 | RHD4CZ5A014IRR1403, RHD4CZ5A014MV2400 |
|  | 1770 | **RHD4-02-002-A014-(IRR)-Air Valves** |  | 2026-09-08 | 2026-09-12 |  |
| RHD4CZ5A014IRR3103 |  | Installation for Air Valves for Irrigation Network - (RD-A-1 /4)-Z5-A014-IRR | 2d | 2026-09-08 | 2026-09-09 | RHD4CZ5A014IRR2302 |
| RHD4CZ5A014IRR3203 |  | Stem and Service box for Air Valves for Irrigation Network - (RD-A-1 /4)-Z5-A014-IRR | 2d | 2026-09-10 | 2026-09-12 | RHD4CZ5A014IRR3103, RHD4CZ5A014IRR2402 |
|  | 3663 | **RHD4-02-002-A014-(IRR)-Concrete Encasement** |  |  |  |  |
|  | 6107 | **RHD4-02-002-A014-(IRR)-HDPE Pipes - 160 mm diameter** |  | 2026-09-01 | 2026-09-12 |  |
| RHD4CZ5A014IRR1100 |  | Excavation works for HDPE Pipline 160 mm - (RD-A-1 /4)-Z5-A014-IRR | 2d | 2026-09-01 | 2026-09-02 | RHD4CZ5A014IRR1103 |
| RHD4CZ5A014IRR1200 |  | Bedding works for HDPE Pipline 160 mm - (RD-A-1 /4)-Z5-A014-IRR | 2d | 2026-09-03 | 2026-09-05 | RHD4CZ5A014IRR1100 |
| RHD4CZ5A014IRR1300 |  | Installing for HDPE Pipline 160 mm - (RD-A-1 /4)-Z5-A014-IRR | 2d | 2026-09-06 | 2026-09-07 | RHD4CZ5A014IRR1200 |
| RHD4CZ5A014IRR1400 |  | Primary Test for HDPE Pipline 160 mm - (RD-A-1 /4)-Z5-A014-IRR | 2d | 2026-09-08 | 2026-09-09 | RHD4CZ5A014IRR1300 |
| RHD4CZ5A014IRR1500 |  | Backfilling and warning tape works for HDPE Pipline 160 mm - (RD-A-1 /4)-Z5-A014-IRR | 2d | 2026-09-10 | 2026-09-12 | RHD4CZ5A014IRR1400 |
|  | 6115 | **RHD4-02-002-A014-(IRR)-Gate Valves (Direct Buried)** |  | 2026-09-06 | 2026-09-15 |  |
| RHD4CZ5A014IRR3100 |  | Installation for Direct Buried Gate Valves - (RD-A-1 /4)-Z5-A014-IRR | 3d | 2026-09-06 | 2026-09-08 | RHD4CZ5A014IRR1300 SS, RHD4CZ5A014IRR1300 FF |
| RHD4CZ5A014IRR3200 |  | Stem and Service box for Direct Buried Gate Valves - (RD-A-1 /4)-Z5-A014-IRR | 3d | 2026-09-13 | 2026-09-15 | RHD4CZ5A014IRR3100, RHD4CZ5A014IRR1500 |
|  | 1769 | **RHD4-02-002-A014-(IRR)-Air Valve Chamber** |  | 2026-09-01 | 2026-09-09 |  |
| RHD4CZ5A014IRR2102 |  | Excavation and Bedding for Valve Chamber for Irrigation Network - (RD-A-1 /4)-Z5-A014-IRR | 2d | 2026-09-01 | 2026-09-02 | RHD4CZ5A014IRR1103 |
| RHD4CZ5A014IRR2202 |  | PC works for Valve Chamber for Irrigation Network - (RD-A-1 /4)-Z5-A014-IRR | 2d | 2026-09-03 | 2026-09-05 | RHD4CZ5A014IRR2102 |
| RHD4CZ5A014IRR2302 |  | Installation for Valve Chamber for Irrigation Network - (RD-A-1 /4)-Z5-A014-IRR | 2d | 2026-09-06 | 2026-09-07 | RHD4CZ5A014IRR2202 |
| RHD4CZ5A014IRR2402 |  | Backfilling works for Valve Chamber for Irrigation Network - (RD-A-1 /4)-Z5-A014-IRR | 2d | 2026-09-08 | 2026-09-09 | RHD4CZ5A014IRR2302 |
|  | 3681 | **RHD4-02-002-Z5-A014-Medium Voltage Network - MV** |  | 2026-09-01 | 2027-03-24 |  |
|  | 3682 | **RHD4-02-002-A014-(MV)-Medium Voltage cable trench** |  | 2027-01-27 | 2027-03-24 |  |
| RHD4CZ5A014MV1100 |  | Excavation for Medium Voltage Trench - (RD-A-1 /4)-Z5-A014-MV | 6d | 2027-01-27 | 2027-02-02 | RHD4ENSDZ5APPMV150, RHD4CZ5A014RD3100, RHD4CZ5L016MV3401 |
| RHD4CZ5A014MV1200 |  | Trench Backfilling for Medium Voltage Network - (RD-A-1 /4)-Z5-A014-MV | 6d | 2027-03-18 | 2027-03-24 | RHD4CZ5A014MV4200 |
|  | 3683 | **RHD4-02-002-A014-(MV)-Medium Voltage duct banks** |  | 2026-09-01 | 2026-09-09 |  |
| RHD4CZ5A014MV2100 |  | Excavation of Duct Banks for Medium Voltage Network - (RD-A-1 /4)-Z5-A014-MV | 2d | 2026-09-01 | 2026-09-02 | RHD4ENSDZ5APPMV150, RHD4CZ5A014IRR1100 SS |
| RHD4CZ5A014MV2200 |  | Installation of Duct Banks for Medium Voltage Network - (RD-A-1 /4)-Z5-A014-MV | 2d | 2026-09-03 | 2026-09-05 | RHD4CZ5A014MV2100, RHD4PRSHLDOSMV1000, RHD4PRSHLSTAGMV1000 |
| RHD4CZ5A014MV2300 |  | Pouring of Duct Banks for Medium Voltage Network - (RD-A-1 /4)-Z5-A014-MV | 2d | 2026-09-06 | 2026-09-07 | RHD4CZ5A014MV2200 |
| RHD4CZ5A014MV2400 |  | Backfilling of Duct Banks for Medium Voltage Network - (RD-A-1 /4)-Z5-A014-MV | 2d | 2026-09-08 | 2026-09-09 | RHD4CZ5A014MV2300 |
|  | 3684 | **RHD4-02-002-A014-(MV)-Medium Voltage cables 3Cx 500 mm²** |  | 2027-02-03 | 2027-03-08 |  |
| RHD4CZ5A014MV3100 |  | Installation of Medium Voltage Cables 3Cx 500 mm² - (RD-A-1 /4)-Z5-A014-MV | 12d | 2027-02-03 | 2027-02-16 | RHD4CZ5A014MV1100, RHD4PRSHLDOSMV1100, RHD4ENMSMV2000, RHD4ENMSMV2010, RHD4PRSHLSTAGMV1100 |
| RHD4CZ5A014MV3200 |  | Joints Installation of Medium Voltage Cables 3Cx 500 mm² - (RD-A-1 /4)-Z5-A014-MV | 6d | 2027-02-17 | 2027-02-24 | RHD4CZ5A014MV3100, RHD4PRSHLDOSMV1300, RHD4PRSHLSTAGMV1300 |
| RHD4CZ5A014MV3300 |  | Testing of Medium Voltage Cables 3Cx 500 mm² - (RD-A-1 /4)-Z5-A014-MV | 8d | 2027-02-25 | 2027-03-06 | RHD4CZ5A014MV3200 |
| RHD4CZ5A014MV3400 |  | Termination of Medium Voltage Cables 3Cx 500 mm² - (RD-A-1 /4)-Z5-A014-MV | 2d | 2027-03-07 | 2027-03-08 | RHD4CZ5A014MV3300 |
|  | 3685 | **RHD4-02-002-A014-(MV)-Medium Voltage cables 3Cx 50 mm²** |  | 2027-03-07 | 2027-03-13 |  |
| RHD4CZ5A014MV3401 |  | Termination of Medium Voltage Cables 3Cx 50 mm² - (RD-A-1 /4)-Z5-A014-MV | 3d | 2027-03-07 | 2027-03-13 | RHD4CZ5A014MV3300 |
|  | 3686 | **RHD4-02-002-A014-(MV)-Normally open Point (Outdoor Type)** |  | 2027-03-14 | 2027-03-17 |  |
| RHD4CZ5A014MV4100 |  | Installation for Normally open Point - (RD-A-1 /4)-Z5-A014-MV | 2d | 2027-03-14 | 2027-03-15 | RHD4PRSHLDOSMV1400, RHD4PRSHLSTAGMV1400, RHD4CZ5A014MV3400, RHD4CZ5A014MV3401 |

| ID | WBS | Task | Duration | Start | Finish | Predecessors |
| --- | --- | --- | --- | --- | --- | --- |
| RHD4CZ5A014MV4200 |  | Termination for Normally open Point - (RD-A-1 /4)-Z5-A014-MV | 2d | 2027-03-16 | 2027-03-17 | RHD4CZ5A014MV4100 |
|  | 4255 | **RHD4-02-002-Z5-A014-Low Voltage Network - LV** |  | 2026-09-03 | 2027-04-22 |  |
|  | 4256 | **RHD4-02-002-A014-(LV)-Low Voltage duct banks** |  | 2026-09-03 | 2026-09-24 |  |
| RHD4CZ5A014LV2100 |  | Excavation of Duct Banks for Low Voltage Network - (RD-A-1 /4)-Z5-A014-LV | 4d | 2026-09-03 | 2026-09-07 | RHD4CZ5A014IRR1100, RHD4CZ5A014MV2100 |
| RHD4CZ5A014LV2200 |  | Installation of Duct Banks for Low Voltage Network - (RD-A-1 /4)-Z5-A014-LV | 6d | 2026-09-08 | 2026-09-14 | RHD4CZ5A014LV2100 |
| RHD4CZ5A014LV2300 |  | Pouring of Duct Banks for Low Voltage Network - (RD-A-1 /4)-Z5-A014-LV | 4d | 2026-09-15 | 2026-09-19 | RHD4CZ5A014LV2200 |
| RHD4CZ5A014LV2400 |  | Backfilling of Duct Banks for Low Voltage Network - (RD-A-1 /4)-Z5-A014-LV | 4d | 2026-09-20 | 2026-09-24 | RHD4CZ5A014LV2300 |
|  | 4257 | **RHD4-02-002-A014-(LV)-Low Voltage Drawpit** |  | 2027-03-25 | 2027-03-29 |  |
| RHD4CZ5A014LV5100 |  | Excavation of Drawpit size 900x900x1000mm for Low Voltage Network - (RD-A-1 /4)-Z5-A014-LV | 2d | 2027-03-25 | 2027-03-27 | RHD4CZ5A014MV1200, RHD4CZ5A014LV2300 |
| RHD4CZ5A014LV5200 |  | Installation of Drawpit size 900x900x1000mm for Low Voltage Network - (RD-A-1 /4)-Z5-A014-LV | 2d | 2027-03-28 | 2027-03-29 | RHD4CZ5A014LV5100 |
|  | 4258 | **RHD4-02-002-A014-(LV)-Low Voltage cables** |  | 2027-03-30 | 2027-04-19 |  |
| RHD4CZ5A014LV3100 |  | Excavation for Low Voltage Cables for Low Voltage Network - (RD-A-1 /4)-Z5-A014-LV | 5d | 2027-03-30 | 2027-04-04 | RHD4CZ5A014LV5200, RHD4CZ5A014LV2400 |
| RHD4CZ5A014LV3200 |  | Cable Laying of Low Voltage Cables for Low Voltage Network - (RD-A-1 /4)-Z5-A014-LV | 5d | 2027-04-05 | 2027-04-10 | RHD4CZ5A014LV3100 |
| RHD4CZ5A014LV3300 |  | Warning tape and Backfill for Low Voltage Cables for Low Voltage Network - (RD-A-1 /4)-Z5-A014-LV | 5d | 2027-04-11 | 2027-04-15 | RHD4CZ5A014LV3200 |
| RHD4CZ5A014LV3400 |  | Testing of Low Voltage Cables for Low Voltage Network - (RD-A-1 /4)-Z5-A014-LV | 3d | 2027-04-17 | 2027-04-19 | RHD4CZ5A014ST2500, RHD4CZ5A014LV3300 |
|  | 4259 | **RHD4-02-002-A014-(LV)-Low Voltage Distribution Pillars** |  | 2027-04-17 | 2027-04-22 |  |
| RHD4CZ5A014LV4100 |  | Leveling for Distribution Pillars for Low Voltage Network - (RD-A-1 /4)-Z5-A014-LV | 2d | 2027-04-17 | 2027-04-18 | RHD4CZ5A014LV3300 |
| RHD4CZ5A014LV4200 |  | Lean Concrete for Distribution Pillars for Low Voltage Network - (RD-A-1 /4)-Z5-A014-LV | 2d | 2027-04-19 | 2027-04-20 | RHD4CZ5A014LV4100 |
| RHD4CZ5A014LV4300 |  | Installation of Distribution Pillars for Low Voltage Network - (RD-A-1 /4)-Z5-A014-LV | 2d | 2027-04-21 | 2027-04-22 | RHD4CZ5A014LV3400, RHD4CZ5A014LV4200 |
|  | 3694 | **RHD4-02-002-Z5-A014-Street Lighting Network - SL** |  | 2026-09-14 | 2027-05-31 |  |
|  | 3695 | **RHD4-02-002-A014-(SL)-Street Lighting duct banks** |  | 2026-09-14 | 2026-09-30 |  |
| RHD4CZ5A014SL2100 |  | Excavation of Duct Banks for Street Lighting Network - (RD-A-1 /4)-Z5-A014-SL | 2d | 2026-09-14 | 2026-09-15 | RHD4ENSDZ5APPSL170, RHD4CZ5A014IRR1100, RHD4CZ5A014LV2100, RHD4CZ5A014PT3200, RHD4CZ5A014IRR1500 |
| RHD4CZ5A014SL2200 |  | Installation of Duct Banks for Street Lighting Network - (RD-A-1 /4)-Z5-A014-SL | 4d | 2026-09-16 | 2026-09-20 | RHD4CZ5A014SL2100 |
| RHD4CZ5A014SL2300 |  | Pouring of Duct Banks for Street Lighting Network - (RD-A-1 /4)-Z5-A014-SL | 4d | 2026-09-21 | 2026-09-26 | RHD4CZ5A014SL2200 |
| RHD4CZ5A014SL2400 |  | Backfilling of Duct Banks for Street Lighting Network - (RD-A-1 /4)-Z5-A014-SL | 4d | 2026-09-27 | 2026-09-30 | RHD4CZ5A014SL2300 |
|  | 3696 | **RHD4-02-002-A014-(SL)-Street Lighting Drawpit** |  | 2027-04-24 | 2027-04-27 |  |
| RHD4CZ5A014SL5100 |  | Excavation of Drawpit size 600x600x900mm for Street Lighting Network - (RD-A-1 /4)-Z5-A014-SL | 2d | 2027-04-24 | 2027-04-25 | RHD4CZ5A014SL2300, RHD4ENSDZ5APPSL170, RHD4CZ5A014LV4300 |
| RHD4CZ5A014SL5200 |  | Installation of Drawpit size 600x600x900mm for Street Lighting Network - (RD-A-1 /4)-Z5-A014-SL | 2d | 2027-04-26 | 2027-04-27 | RHD4CZ5A014SL5100, RHD4PRSHLDOSSL1400, RHD4PRSHLSTAGSL1400 |
|  | 3698 | **RHD4-02-002-A014-(SL)-Street Lighting Poles** |  | 2027-04-28 | 2027-05-25 |  |
| RHD4CZ5A014SL1100 |  | Excavation for RC Base for Lighting Poles for Street Lighting Network - (RD-A-1 /4)-Z5-A014-SL | 3d | 2027-04-28 | 2027-05-01 | RHD4CZ5A014SL2400, RHD4ENSDZ5APPSL170, RHD4CZ5A014SL5200 |
| RHD4CZ5A014SL1200 |  | Installation for RC Base for Lighting Poles for Street Lighting Network - (RD-A-1 /4)-Z5-A014-SL | 3d | 2027-05-02 | 2027-05-04 | RHD4CZ5A014SL1100 |
| RHD4CZ5A014SL1300 |  | Backfill for RC Base for Lighting Poles for Street Lighting Network - (RD-A-1 /4)-Z5-A014-SL | 3d | 2027-05-05 | 2027-05-08 | RHD4CZ5A014SL1200 |
| RHD4CZ5A014SL1400 |  | Installation for Lighting Poles for Street Lighting Network - (RD-A-1 /4)-Z5-A014-SL | 4d | 2027-05-09 | 2027-05-12 | RHD4CZ5A014SL1300, RHD4PRSHLDOSSL1200, RHD4ENMSSL2000, RHD4ENMSSL2010, RHD4PRSHLSTAGSL1200 |
| RHD4CZ5A014SL1500 |  | Luminaire Installation for Lighting Poles for Street Lighting Network - (RD-A-1 /4)-Z5-A014-SL | 5d | 2027-05-20 | 2027-05-25 | RHD4CZ5A014SL1400, RHD4CZ5A014SL6100, RHD4PRSHLDOSSL1300, RHD4PRSHLSTAGSL1300 |
|  | 3697 | **RHD4-02-002-A014-(SL)-Street Lighting cables** |  | 2027-05-09 | 2027-05-31 |  |
| RHD4CZ5A014SL3100 |  | Excavation for Street Lighting Cables for Street Lighting Network - (RD-A-1 /4)-Z5-A014-SL | 5d | 2027-05-09 | 2027-05-13 | RHD4CZ5A014SL1300, RHD4ENSDZ5APPSL170 |
| RHD4CZ5A014SL3200 |  | Cable Laying of Street Lighting Cables for Street Lighting Network - (RD-A-1 /4)-Z5-A014-SL | 4d | 2027-05-19 | 2027-05-23 | RHD4CZ5A014SL3100, RHD4PRSHLDOSSL1100, RHD4ENMSSL2000, RHD4ENMSSL2010, RHD4PRSHLSTAGSL1100 |
| RHD4CZ5A014SL3300 |  | Warning tape and Backfill for Street Lighting Cables for Street Lighting Network - (RD-A-1 /4)-Z5-A014-SL | 4d | 2027-05-24 | 2027-05-27 | RHD4CZ5A014SL3200, RHD4CZ5A014SL6100 |
| RHD4CZ5A014SL3400 |  | Testing of Street Lighting Cables for Street Lighting Network - (RD-A-1 /4)-Z5-A014-SL | 3d | 2027-05-29 | 2027-05-31 | RHD4CZ5A014SL3300, RHD4CZ5A014SL1500 |
|  | 3700 | **RHD4-02-002-A014-(SL)-Street Lighting Earthing System** |  | 2027-05-13 | 2027-05-19 |  |
| RHD4CZ5A014SL6100 |  | Installation of Earthing for Lighting Poles and Fedder Pillers for Street Lighting Network - (RD-A-1 /4)-Z5-A014-SL | 2d | 2027-05-13 | 2027-05-19 | RHD4CZ5A014SL1400, RHD4ENMSER2000, RHD4ENMSER2010 |
|  | 3706 | **RHD4-02-002-Z5-A014-Telecommunications Network - TC** |  | 2027-06-01 | 2027-06-28 |  |
|  | 3707 | **RHD4-02-002-A014-(TC)-Telecommunications Ducts** |  | 2027-06-01 | 2027-06-23 |  |
| RHD4CZ5A014TC2100 |  | Excavation of HDPE Ducts for Telecom Network - (RD-A-1 /4)-Z5-A014-TC | 6d | 2027-06-01 | 2027-06-07 | RHD4ENSDZ5APPTC190, RHD4CZ5A014SL3400 |
| RHD4CZ5A014TC2200 |  | Installation of HDPE Ducts for Telecom Network - (RD-A-1 /4)-Z5-A014-TC | 8d | 2027-06-08 | 2027-06-16 | RHD4CZ5A014TC2100, RHD4PRSHLDOSTC1000, RHD4PRSHLSTAGTC1000 |
| RHD4CZ5A014TC2400 |  | Backfilling of HDPE Ducts for Telecom Network - (RD-A-1 /4)-Z5-A014-TC | 6d | 2027-06-17 | 2027-06-23 | RHD4CZ5A014TC2200 |
|  | 3708 | **RHD4-02-002-A014-(TC)-Telecommunications Manholes** |  | 2027-06-24 | 2027-06-28 |  |
| RHD4CZ5A014TC5100 |  | Excavation for Manholes for Telecom Network - (RD-A-1 /4)-Z5-A014-TC | 2d | 2027-06-24 | 2027-06-26 | RHD4ENSDZ5APPTC190, RHD4CZ5A014TC2400 |
| RHD4CZ5A014TC5200 |  | Installation of Manholes for Telecom Network - (RD-A-1 /4)-Z5-A014-TC | 2d | 2027-06-27 | 2027-06-28 | RHD4CZ5A014TC5100, RHD4PRSHLDOSTC1200, RHD4PRSHLSTAGTC1200 |
|  | 3709 | **RHD4-02-002-A014-(TC)-Telecomminications Road Crossings** |  |  |  |  |
|  | 3710 | **RHD4-02-002-Z5-A014-Information and Communication Technologies - ICT** |  | 2027-06-29 | 2027-08-29 |  |
|  | 3711 | **RHD4-02-002-A014-(ICT)-Information and Communication Technologies Ducts** |  | 2027-06-29 | 2027-08-19 |  |
| RHD4CZ5A014ICT2100 |  | Excavation of HDPE Ducts for ICT Network - (RD-A-1 /4)-Z5-A014-ICT | 13d | 2027-06-29 | 2027-07-13 | RHD4ENSDZ5APPICT200, RHD4CZ5A014TC5200 |
| RHD4CZ5A014ICT2200 |  | Installation of HDPE Ducts for ICT Network - (RD-A-1 /4)-Z5-A014-ICT | 19d | 2027-07-14 | 2027-08-04 | RHD4CZ5A014ICT2100, RHD4PRSHLDOSICT1000, RHD4PRSHLSTAGICT1000 |
| RHD4CZ5A014ICT2400 |  | Backfilling of HDPE Ducts for ICT Network - (RD-A-1 /4)-Z5-A014-ICT | 13d | 2027-08-05 | 2027-08-19 | RHD4CZ5A014ICT2200 |
|  | 3712 | **RHD4-02-002-A014-(ICT)-Information and Communication Technologies Manholes** |  | 2027-08-21 | 2027-08-29 |  |
| RHD4CZ5A014ICT5100 |  | Excavation for Manholes for ICT Network - (RD-A-1 /4)-Z5-A014-ICT | 4d | 2027-08-21 | 2027-08-24 | RHD4ENSDZ5APPICT200, RHD4CZ5A014ICT2400 |
| RHD4CZ5A014ICT5200 |  | Installation of Manholes for ICT Network - (RD-A-1 /4)-Z5-A014-ICT | 4d | 2027-08-25 | 2027-08-29 | RHD4CZ5A014ICT5100, RHD4PRSHLDOSICT1200, RHD4PRSHLSTAGICT1200 |
|  | 3713 | **RHD4-02-002-A014-(ICT)-Information and Communication Technologies Road Crossings** |  |  |  |  |
|  | 3701 | **RHD4-02-002-Z5-A014-Landscape Network - LS** |  |  |  |  |
|  | 3702 | **RHD4-02-002-A014-(LS)-Landscape Lighting cables** |  |  |  |  |
|  | 3703 | **RHD4-02-002-A014-(LS)-Landscape Feeder Pillars** |  |  |  |  |
|  | 3704 | **RHD4-02-002-A014-(LS)-Landscape Bollard Poles** |  |  |  |  |
|  | 3705 | **RHD4-02-002-A014-(LS)-Landscape Feeder Pillars Earthing** |  |  |  |  |
|  | 3714 | **RHD4-02-002-Z5-A014-Security Network - CCTV** |  | 2027-08-30 | 2027-09-09 |  |
|  | 2959 | **RHD4-02-002-A014-(CCTV)-CCTV Poles** |  | 2027-08-30 | 2027-09-09 |  |
| RHD4CZ5A014CCTV1100 |  | Excavation for RC Base for CCTV Poles for Security Network - (RD-A-1 /4)-Z5-A014-CCTV | 2d | 2027-08-30 | 2027-08-31 | RHD4CZ5A014ICT5200 |
| RHD4CZ5A014CCTV1200 |  | Installation for RC Base for CCTV Poles for Security Network - (RD-A-1 /4)-Z5-A014-CCTV | 2d | 2027-09-01 | 2027-09-02 | RHD4CZ5A014CCTV1100 |
| RHD4CZ5A014CCTV1300 |  | Backfill for RC Base for CCTV Poles for Security Network - (RD-A-1 /4)-Z5-A014-CCTV | 2d | 2027-09-04 | 2027-09-05 | RHD4CZ5A014CCTV1200 |
| RHD4CZ5A014CCTV1400 |  | Installation for CCTV Poles for Security Network - (RD-A-1 /4)-Z5-A014-CCTV | 2d | 2027-09-06 | 2027-09-07 | RHD4CZ5A014CCTV1300 |

| ID | WBS | Task | Duration | Start | Finish | Predecessors |
| --- | --- | --- | --- | --- | --- | --- |
| RHD4CZ5A014CCTV1500 |  | Protection post Installation for CCTV Poles for Security Network - (RD-A-1 /4)-Z5-A014-CCTV | 2d | 2027-09-08 | 2027-09-09 | RHD4CZ5A014CCTV1400 |
|  | 3715 | **RHD4-02-002-A014-(CCTV)-Civil Works** |  |  |  |  |
|  | 3353 | **RHD4-02-002-Z5-L07** |  | 2026-07-12 | 2027-12-15 |  |
|  | 3384 | **RHD4-02-002-Z5-L07-Crossings Sewage Network - SWCr** |  |  |  |  |
|  | 3394 | **RHD4-02-002-L07-(SWCr)-MH Works - 1200 mm diameter** |  |  |  |  |
|  | 3390 | **RHD4-02-002-L07-(SWCr)-UPVC Pipes - 200 mm diameter** |  |  |  |  |
|  | 3428 | **RHD4-02-002-Z5-L07-Crossings Potable Network - PTCr** |  |  |  |  |
|  | 3430 | **RHD4-02-002-L07-(PTCr)-HDPE Pipes - 160 mm diameter** |  |  |  |  |
|  | 3429 | **RHD4-02-002-L07-(PTCr)-HDPE Pipes - 110 mm diameter** |  |  |  |  |
|  | 3434 | **RHD4-02-002-L07-(PTCr)-Gate Valves (Direct Buried)** |  |  |  |  |
|  | 3475 | **RHD4-02-002-Z5-L07-Crossings Irrigation Network - IRRC** |  |  |  |  |
|  | 3476 | **RHD4-02-002-L07-(IRRC)-HDPE Pipes - 160 mm diameter** |  |  |  |  |
|  | 3484 | **RHD4-02-002-L07-(IRRC)-Gate Valves (Direct Buried)** |  |  |  |  |
|  | 3487 | **RHD4-02-002-L07-(IRRC)-Wash out Chamber** |  |  |  |  |
|  | 3488 | **RHD4-02-002-L07-(IRRC)-Wash out Valves** |  |  |  |  |
|  | 3532 | **RHD4-02-002-Z5-L07-Road Works - RD** |  | 2026-08-30 | 2027-12-15 |  |
|  | 3533 | **RHD4-02-002-L07-(RD)-Subgrade** |  | 2026-08-30 | 2026-09-03 |  |
| RHD4CZ5L07RD1100 |  | Supply, lay and compaction subgrade compacted thickness 300 mm for Roads - (RD-L-7)-Z5-L07-RD(Completed) | 5d | 2026-08-30 | 2026-09-03 | RHD4ENSDZ5APPRD220, RHD4ENSDZ5APPEW100 SS, RHD4CZ5L07ST3301, RHD4CZ5L07ST3302, RHD4CZ5L07ICT3400, RHD4CZ5L07ICT3400 FF |
|  | 3534 | **RHD4-02-002-L07-(RD)-Aggregate Base Course** |  | 2026-09-05 | 2026-09-10 |  |
| RHD4CZ5L07RD2100 |  | Supply, lay and compaction Aggregate base course compacted thickness 300 mmfor Roads - (RD-L-7)-Z5-L07-RD | 6d | 2026-09-05 | 2026-09-10 | RHD4PRSHLDOSRD1000, RHD4PRSHLSTAGRD1000, RHD4ENSDZ5APPRD220, RHD4ENSDZ5APPEW100 SS, RHD4CZ5L07RD1100 |
|  | 3535 | **RHD4-02-002-L07-(RD)-Bituminous base course Two Layers, including (MC1)&(RC2)** |  | 2026-09-12 | 2027-11-18 |  |
| RHD4CZ5L07RD3100 |  | Supply, lay and Asphaltic base course including Prime Coat (MC1) for 1st Layer - (RD-L-7)-Z5-L07-RD | 2d | 2026-09-12 | 2026-09-13 | RHD4CZ5L07RD2100, RHD4PRSHLDOSRD1100, RHD4ENMSASPH2000, RHD4ENMSASPH2010, RHD4PRSHLSTAGRD1100 |
| RHD4CZ5L07RD3200 |  | Supply, lay and Asphaltic base course including Tack Coat (RC2) for 2nd Layer - (RD-L-7)-Z5-L07-RD | 2d | 2027-11-17 | 2027-11-18 | RHD4PRSHLDOSRD1100, RHD4PRSHLSTAGRD1100, RHD4CZ5L07CCTV6100 |
|  | 3537 | **RHD4-02-002-L07-(RD)-Precast Concrete Curb** |  | 2027-11-20 | 2027-11-25 |  |
| RHD4CZ5L07RD5100 |  | Supply and installation Precast Concrete Kerb for Roads - (RD-L-7)-Z5-L07-RD | 6d | 2027-11-20 | 2027-11-25 | RHD4CZ5L07RD3200, RHD4PRSHLDOSRD1200, RHD4ENMSRD2000, RHD4ENMSRD2010, RHD4PRSHLSTAGRD1200, RHD4GNTCZ7FT1800 |
|  | 3540 | **RHD4-02-002-L07-(RD)-Traffic Signage** |  | 2027-11-27 | 2027-12-02 |  |
| RHD4CZ5L07RD8100 |  | Installation of Traffic Signage for Road Network - (RD-L-7)-Z5-L07-RD | 6d | 2027-11-27 | 2027-12-02 | RHD4CZ5L07RD5100, RHD4CZ7L03RD7100 |
|  | 3538 | **RHD4-02-002-L07-(RD)-Precast Interlocking Block Pavers** |  | 2027-12-04 | 2027-12-09 |  |
| RHD4CZ5L07RD6100 |  | Interlocking block pavers for sidewalk-footpath for Side walks and Parking areas - (RD-L-7)-Z5-L07-RD | 6d | 2027-12-04 | 2027-12-09 | RHD4PRSHLDOSRD1300, RHD4PRSHLDOSRD1400, RHD4ENMSRD2000, RHD4ENMSRD2010, RHD4PRSHLSTAGRD1300, RHD4CZ5L07RD8100 |
|  | 3536 | **RHD4-02-002-L07-(RD)-Bituminous concrete wearing course including tack coat (RC2)** |  | 2027-12-11 | 2027-12-12 |  |
| RHD4CZ5L07RD4100 |  | Supply, lay and compaction Asphaltic wearing course including tack Coat (RC2)for Road Network - (RD-L-7)-Z5-L07-RD | 2d | 2027-12-11 | 2027-12-12 | RHD4CZ5L07RD6100 |
|  | 3539 | **RHD4-02-002-L07-(RD)-Pavement Marking** |  | 2027-12-13 | 2027-12-15 |  |
| RHD4CZ5L07RD7100 |  | Pavement Markings for Road Network - (RD-L-7)-Z5-L07-RD | 3d | 2027-12-13 | 2027-12-15 | RHD4CZ5L07RD4100, RHD4PRSHLDOSRD1500, RHD4PRSHLSTAGRD1500 |
|  | 3357 | **RHD4-02-002-Z5-L07-Storm Network - ST** |  | 2026-07-12 | 2026-08-25 |  |
|  | 3375 | **RHD4-02-002-L07-(ST)-MH Works - 1500 mm diameter** |  | 2026-07-12 | 2026-07-25 |  |
| RHD4CZ5L07ST3101 |  | Excavation and PC Blinding works for MH 1500 mm - (RD-L-7)-Z5-L07-ST | 2d | 2026-07-12 | 2026-07-13 | RHD4ENSDZ5APPST110, RHD4ENMSST2000, RHD4PRSHLDOSST1003, RHD4ENSDZ5APPRD220, RHD4ENSDZ5APPEW100 SS |
| RHD4CZ5L07ST3201 |  | Installation of Base for MH 1500 mm - (RD-L-7)-Z5-L07-ST | 4d | 2026-07-14 | 2026-07-18 | RHD4CZ5L07ST3101, RHD4PRSHLSTAGST1604 |
| RHD4CZ5L07ST3301 |  | MH Ring and C.Slab works and Backfilling works for MH 1500 mm - (RD-L-7)-Z5-L07-ST | 2d | 2026-07-19 | 2026-07-20 | RHD4CZ5L07ST3201, RHD4PRSHLDOSST1604 |
| RHD4CZ5L07ST3401 |  | Steel Cover for MH 1500 mm - (RD-L-7)-Z5-L07-ST | 2d | 2026-07-21 | 2026-07-22 | RHD4CZ5L07ST3301, RHD4PRSHLDOSST1704, RHD4PRSHLSTAGST1704 |
| RHD4CZ5L07ST3501 |  | Finishing, Benching, Testing works for MH 1500 mm - (RD-L-7)-Z5-L07-ST | 2d | 2026-07-23 | 2026-07-25 | RHD4CZ5L07ST3401 |
|  | 3376 | **RHD4-02-002-L07-(ST)-MH Works - 2000 mm diameter** |  | 2026-07-14 | 2026-08-04 |  |
| RHD4CZ5L07ST3102 |  | Excavation and PC Blinding works for MH 2000 mm - (RD-L-7)-Z5-L07-ST | 5d | 2026-07-14 | 2026-07-19 | RHD4CZ5L07ST3101, RHD4ENSDZ5APPST110, RHD4ENMSST2000 |
| RHD4CZ5L07ST3202 |  | Installation of Base for MH 2000 mm - (RD-L-7)-Z5-L07-ST | 4d | 2026-07-20 | 2026-07-23 | RHD4CZ5L07ST3102, RHD4PRSHLSTAGST1604 |
| RHD4CZ5L07ST3302 |  | MH Ring and C.Slab works and Backfilling works for MH 2000 mm - (RD-L-7)-Z5-L07-ST | 4d | 2026-07-25 | 2026-07-28 | RHD4CZ5L07ST3202, RHD4PRSHLDOSST1604 |
| RHD4CZ5L07ST3402 |  | Steel Cover for MH 2000 mm - (RD-L-7)-Z5-L07-ST | 3d | 2026-07-29 | 2026-08-01 | RHD4CZ5L07ST3302, RHD4CZ5L07ST3401 SS, RHD4PRSHLDOSST1704, RHD4PRSHLSTAGST1704 |
| RHD4CZ5L07ST3502 |  | Finishing, Benching, Testing works for MH 2000 mm - (RD-L-7)-Z5-L07-ST | 3d | 2026-08-02 | 2026-08-04 | RHD4CZ5L07ST3402, RHD4CZ5L07ST3501 SS |
|  | 3374 | **RHD4-02-002-L07-(ST)-MH Works - 1200 mm diameter** |  | 2026-07-20 | 2026-07-30 |  |
| RHD4CZ5L07ST3100 |  | Excavation and PC Blinding works for MH 1200 mm - (RD-L-7)-Z5-L07-ST | 2d | 2026-07-20 | 2026-07-21 | RHD4CZ5L07ST3102, RHD4ENSDZ5APPST110, RHD4ENMSST2000, RHD4ENMSST2010 |
| RHD4CZ5L07ST3200 |  | Installation of Base for MH 1200 mm - (RD-L-7)-Z5-L07-ST | 2d | 2026-07-22 | 2026-07-23 | RHD4CZ5L07ST3100, RHD4PRSHLSTAGST1604 |
| RHD4CZ5L07ST3300 |  | MH Ring and C.Slab works and Backfilling works for MH 1200 mm - (RD-L-7)-Z5-L07-ST | 2d | 2026-07-25 | 2026-07-26 | RHD4CZ5L07ST3200, RHD4PRSHLDOSST1604 |
| RHD4CZ5L07ST3400 |  | Steel Cover for MH 1200 mm - (RD-L-7)-Z5-L07-ST | 2d | 2026-07-27 | 2026-07-28 | RHD4CZ5L07ST3300, RHD4PRSHLDOSST1704, RHD4PRSHLSTAGST1704 |
| RHD4CZ5L07ST3500 |  | Finishing, Benching, Testing works for MH 1200 mm - (RD-L-7)-Z5-L07-ST | 2d | 2026-07-29 | 2026-07-30 | RHD4CZ5L07ST3400 |
|  | 3366 | **RHD4-02-002-L07-(ST)-GRP Pipes - 1200 mm diameter** |  | 2026-07-25 | 2026-08-06 |  |
| RHD4CZ5L07ST1108 |  | Excavation works for GRP Pipe Line 1200 mm - (RD-L-7)-Z5-L07-ST | 4d | 2026-07-25 | 2026-07-28 | RHD4CZ5L07ST3202, RHD4CZ5L07ST3201, RHD4CZ5L07ST3200, RHD4ENSDZ5APPST110, RHD4ENSDZ7APPEW100, RHD4ENSDZ7APPRD220, RHD4CZ7L03RW3000 |
| RHD4CZ5L07ST1208 |  | Bedding works for GRP Pipe Line 1200 mm - (RD-L-7)-Z5-L07-ST | 2d | 2026-07-29 | 2026-07-30 | RHD4CZ5L07ST1108 |
| RHD4CZ5L07ST1308 |  | Installing for GRP Pipe Line 1200 mm - (RD-L-7)-Z5-L07-ST | 2d | 2026-08-01 | 2026-08-02 | RHD4CZ5L07ST1208, RHD4CZ5L07ST3302, RHD4CZ5L07ST3301, RHD4CZ5L07ST3300, RHD4PRSHLSTAGST1004, RHD4PRSHLDOSST1604, RHD4PRSHLPOST1000, RHD4PRSHLDOSST1004 |
| RHD4CZ5L07ST1408 |  | Primary Test for GRP Pipe Line 1200 mm - (RD-L-7)-Z5-L07-ST | 2d | 2026-08-03 | 2026-08-04 | RHD4CZ5L07ST1308 |
| RHD4CZ5L07ST1508 |  | Backfilling and warning tape works for GRP Pipe Line 1200 mm - (RD-L-7)-Z5-L07-ST | 2d | 2026-08-05 | 2026-08-06 | RHD4CZ5L07ST1408 |
|  | 3365 | **RHD4-02-002-L07-(ST)-GRP Pipes - 1100 mm diameter** |  | 2026-07-29 | 2026-08-11 |  |
| RHD4CZ5L07ST1107 |  | Excavation works for GRP Pipe Line 1100 mm - (RD-L-7)-Z5-L07-ST | 4d | 2026-07-29 | 2026-08-02 | RHD4CZ5L07ST1108, RHD4ENSDZ5APPST110 |
| RHD4CZ5L07ST1207 |  | Bedding works for GRP Pipe Line 1100 mm - (RD-L-7)-Z5-L07-ST | 2d | 2026-08-03 | 2026-08-04 | RHD4CZ5L07ST1107 |
| RHD4CZ5L07ST1307 |  | Installing for GRP Pipe Line 1100 mm - (RD-L-7)-Z5-L07-ST | 2d | 2026-08-05 | 2026-08-06 | RHD4CZ5L07ST1207, RHD4CZ5L07ST1308, RHD4PRSHLSTAGST1004, RHD4PRSHLDOSST1604, RHD4PRSHLPOST1000, RHD4PRSHLDOSST1004 |
| RHD4CZ5L07ST1407 |  | Primary Test for GRP Pipe Line 1100 mm - (RD-L-7)-Z5-L07-ST | 2d | 2026-08-08 | 2026-08-09 | RHD4CZ5L07ST1307 |
| RHD4CZ5L07ST1507 |  | Backfilling and warning tape works for GRP Pipe Line 1100 mm - (RD-L-7)-Z5-L07-ST | 2d | 2026-08-10 | 2026-08-11 | RHD4CZ5L07ST1407, RHD4CZ5L07ST1508 |
|  | 3364 | **RHD4-02-002-L07-(ST)-GRP Pipes - 1000 mm diameter** |  | 2026-08-03 | 2026-08-16 |  |
| RHD4CZ5L07ST1106 |  | Excavation works for GRP Pipe Line 1000 mm - (RD-L-7)-Z5-L07-ST | 4d | 2026-08-03 | 2026-08-06 | RHD4CZ5L07ST1107, RHD4ENSDZ5APPST110 |
| RHD4CZ5L07ST1206 |  | Bedding works for GRP Pipe Line 1000 mm - (RD-L-7)-Z5-L07-ST | 2d | 2026-08-08 | 2026-08-09 | RHD4CZ5L07ST1106 |
| RHD4CZ5L07ST1306 |  | Installing for GRP Pipe Line 1000 mm - (RD-L-7)-Z5-L07-ST | 2d | 2026-08-10 | 2026-08-11 | RHD4CZ5L07ST1206, RHD4CZ5L07ST1307, RHD4PRSHLSTAGST1004, RHD4PRSHLDOSST1604, RHD4PRSHLPOST1000, RHD4PRSHLDOSST1004 |
| RHD4CZ5L07ST1406 |  | Primary Test for GRP Pipe Line 1000 mm - (RD-L-7)-Z5-L07-ST | 2d | 2026-08-12 | 2026-08-13 | RHD4CZ5L07ST1306 |
| RHD4CZ5L07ST1506 |  | Backfilling and warning tape works for GRP Pipe Line 1000 mm - (RD-L-7)-Z5-L07-ST | 2d | 2026-08-15 | 2026-08-16 | RHD4CZ5L07ST1406, RHD4CZ5L07ST1507 |

| ID | WBS | Task | Duration | Start | Finish | Predecessors |
| --- | --- | --- | --- | --- | --- | --- |
|  | 3361 | **RHD4-02-002-L07-(ST)-GRP Pipes - 700 mm diameter** |  | 2026-08-08 | 2026-08-18 |  |
| RHD4CZ5L07ST1103 |  | Excavation works for GRP Pipe Line 700 mm - (RD-L-7)-Z5-L07-ST | 2d | 2026-08-08 | 2026-08-09 | RHD4CZ5L07ST1106, RHD4ENSDZ5APPST110 |
| RHD4CZ5L07ST1203 |  | Bedding works for GRP Pipe Line 700 mm - (RD-L-7)-Z5-L07-ST | 2d | 2026-08-10 | 2026-08-11 | RHD4CZ5L07ST1103 |
| RHD4CZ5L07ST1303 |  | Installing for GRP Pipe Line 700 mm - (RD-L-7)-Z5-L07-ST | 2d | 2026-08-12 | 2026-08-13 | RHD4CZ5L07ST1203, RHD4CZ5L07ST1306, RHD4PRSHLSTAGST1004, RHD4PRSHLDOSST1604, RHD4PRSHLPOST1000, RHD4PRSHLDOSST1004 |
| RHD4CZ5L07ST1403 |  | Primary Test for GRP Pipe Line 700 mm - (RD-L-7)-Z5-L07-ST | 2d | 2026-08-15 | 2026-08-16 | RHD4CZ5L07ST1303 |
| RHD4CZ5L07ST1503 |  | Backfilling and warning tape works for GRP Pipe Line 700 mm - (RD-L-7)-Z5-L07-ST | 2d | 2026-08-17 | 2026-08-18 | RHD4CZ5L07ST1403, RHD4CZ5L07ST1506 |
|  | 3360 | **RHD4-02-002-L07-(ST)-GRP Pipes - 600 mm diameter** |  | 2026-08-10 | 2026-08-20 |  |
| RHD4CZ5L07ST1102 |  | Excavation works for GRP Pipe Line 600 mm - (RD-L-7)-Z5-L07-ST | 2d | 2026-08-10 | 2026-08-11 | RHD4CZ5L07ST1103, RHD4ENSDZ5APPST110 |
| RHD4CZ5L07ST1202 |  | Bedding works for GRP Pipe Line 600 mm - (RD-L-7)-Z5-L07-ST | 2d | 2026-08-12 | 2026-08-13 | RHD4CZ5L07ST1102 |
| RHD4CZ5L07ST1302 |  | Installing for GRP Pipe Line 600 mm - (RD-L-7)-Z5-L07-ST | 2d | 2026-08-15 | 2026-08-16 | RHD4CZ5L07ST1202, RHD4CZ5L07ST1303, RHD4PRSHLSTAGST1004, RHD4PRSHLDOSST1604, RHD4PRSHLPOST1000, RHD4PRSHLDOSST1004 |
| RHD4CZ5L07ST1402 |  | Primary Test for GRP Pipe Line 600 mm - (RD-L-7)-Z5-L07-ST | 2d | 2026-08-17 | 2026-08-18 | RHD4CZ5L07ST1302 |
| RHD4CZ5L07ST1502 |  | Backfilling and warning tape works for GRP Pipe Line 600 mm - (RD-L-7)-Z5-L07-ST | 2d | 2026-08-19 | 2026-08-20 | RHD4CZ5L07ST1402, RHD4CZ5L07ST1503 |
|  | 3359 | **RHD4-02-002-L07-(ST)-GRP Pipes - 500 mm diameter** |  | 2026-08-12 | 2026-08-23 |  |
| RHD4CZ5L07ST1101 |  | Excavation works for GRP Pipe Line 500 mm - (RD-L-7)-Z5-L07-ST | 2d | 2026-08-12 | 2026-08-13 | RHD4CZ5L07ST1102, RHD4ENSDZ5APPST110 |
| RHD4CZ5L07ST1201 |  | Bedding works for GRP Pipe Line 500 mm - (RD-L-7)-Z5-L07-ST | 2d | 2026-08-15 | 2026-08-16 | RHD4CZ5L07ST1101 |
| RHD4CZ5L07ST1301 |  | Installing for GRP Pipe Line 500 mm - (RD-L-7)-Z5-L07-ST | 2d | 2026-08-17 | 2026-08-18 | RHD4CZ5L07ST1201, RHD4CZ5L07ST1302, RHD4PRSHLSTAGST1004, RHD4PRSHLDOSST1604, RHD4PRSHLPOST1000, RHD4PRSHLDOSST1004 |
| RHD4CZ5L07ST1401 |  | Primary Test for GRP Pipe Line 500 mm - (RD-L-7)-Z5-L07-ST | 2d | 2026-08-19 | 2026-08-20 | RHD4CZ5L07ST1301 |
| RHD4CZ5L07ST1501 |  | Backfilling and warning tape works for GRP Pipe Line 500 mm - (RD-L-7)-Z5-L07-ST | 2d | 2026-08-22 | 2026-08-23 | RHD4CZ5L07ST1401, RHD4CZ5L07ST1502 |
|  | 3373 | **RHD4-02-002-L07-(ST)-UPVC Pipes - 400 mm diameter** |  | 2026-08-09 | 2026-08-19 |  |
| RHD4CZ5L07ST2101 |  | Excavation works for UPVC Pipe Line 400 mm - (RD-L-7)-Z5-L07-ST | 2d | 2026-08-09 | 2026-08-10 | RHD4CZ5L07ST3300, RHD4CZ5L07ST3301, RHD4CZ5L07ST7300, RHD4CZ5L07ST8300, RHD4ENSDZ5APPST110 |
| RHD4CZ5L07ST2201 |  | Bedding works for UPVC Pipe Line 400 mm - (RD-L-7)-Z5-L07-ST | 2d | 2026-08-11 | 2026-08-12 | RHD4CZ5L07ST2101 |
| RHD4CZ5L07ST2301 |  | Installing for UPVC Pipe Line 400 mm - (RD-L-7)-Z5-L07-ST | 2d | 2026-08-13 | 2026-08-15 | RHD4CZ5L07ST2201, RHD4PRSHLDOSST1104, RHD4PRSHLSTAGST1104 |
| RHD4CZ5L07ST2401 |  | Primary Test for UPVC Pipe Line 400 mm - (RD-L-7)-Z5-L07-ST | 2d | 2026-08-16 | 2026-08-17 | RHD4CZ5L07ST2301 |
| RHD4CZ5L07ST2501 |  | Backfilling and warning tape works for UPVC Pipe Line 400 mm - (RD-L-7)-Z5-L07-ST | 2d | 2026-08-18 | 2026-08-19 | RHD4CZ5L07ST2401, RHD4CZ5L07ST6100 |
|  | 3372 | **RHD4-02-002-L07-(ST)-UPVC Pipes - 300 mm diameter** |  | 2026-08-11 | 2026-08-25 |  |
| RHD4CZ5L07ST2100 |  | Excavation works for UPVC Pipe Line 300 mm - (RD-L-7)-Z5-L07-ST | 2d | 2026-08-11 | 2026-08-12 | RHD4CZ5L07ST2101, RHD4CZ5L07ST3300, RHD4CZ5L07ST3301, RHD4ENSDZ5APPST110 |
| RHD4CZ5L07ST2200 |  | Bedding works for UPVC Pipe Line 300 mm - (RD-L-7)-Z5-L07-ST | 2d | 2026-08-13 | 2026-08-15 | RHD4CZ5L07ST2100 |
| RHD4CZ5L07ST2300 |  | Installing for UPVC Pipe Line 300 mm - (RD-L-7)-Z5-L07-ST | 2d | 2026-08-16 | 2026-08-17 | RHD4CZ5L07ST2200, RHD4CZ5L07ST2301, RHD4PRSHLDOSST1104, RHD4PRSHLSTAGST1104 |
| RHD4CZ5L07ST2400 |  | Primary Test for UPVC Pipe Line 300 mm - (RD-L-7)-Z5-L07-ST | 2d | 2026-08-18 | 2026-08-19 | RHD4CZ5L07ST2300 |
| RHD4CZ5L07ST2500 |  | Backfilling and warning tape works for UPVC Pipe Line 300 mm - (RD-L-7)-Z5-L07-ST | 2d | 2026-08-24 | 2026-08-25 | RHD4CZ5L07ST2400, RHD4CZ5L07ST2501, RHD4CZ5L07ST6100, RHD4CZ5L07ST1501 |
|  | 3380 | **RHD4-02-002-L07-(ST)-Concrete Encasement** |  | 2026-08-16 | 2026-08-17 |  |
| RHD4CZ5L07ST6100 |  | Pipe Encasement for Storm Pipelines - (RD-L-7)-Z5-L07-ST | 2d | 2026-08-16 | 2026-08-17 | RHD4CZ5L07ST2301 SS, RHD4CZ5L07ST2300 SS, RHD4CZ5L07ST2300 FF, RHD4CZ5L07ST2301 FF, RHD4CZ5L07ST2201, RHD4CZ5L07ST2200 |
|  | 3381 | **RHD4-02-002-Z5-L07-Catch Basin - ST** |  | 2026-07-27 | 2026-08-15 |  |
|  | 3382 | **RHD4-02-002-L07-(ST)-Single Catch Basin Works** |  | 2026-07-27 | 2026-08-15 |  |
| RHD4CZ5L07ST7100 |  | Excavation works for Single Catch Basin - (RD-L-7)-Z5-L07-ST | 3d | 2026-07-27 | 2026-07-29 | RHD4CZ5L07ST3300, RHD4CZ5L07ST3301, RHD4ENSDZ5APPST110 |
| RHD4CZ5L07ST7200 |  | PC Blinding, Installation and Pipe connection for Single Catch Basin - (RD-L-7)-Z5-L07-ST | 3d | 2026-07-30 | 2026-08-02 | RHD4CZ5L07ST7100 |
| RHD4CZ5L07ST7300 |  | Rings & C.Slab & Final Backfill for Single Catch Basin - (RD-L-7)-Z5-L07-ST | 3d | 2026-08-03 | 2026-08-05 | RHD4CZ5L07ST7200, RHD4PRSHLDOSST1304, RHD4PRSHLSTAGST1304 |
| RHD4CZ5L07ST7400 |  | Steel Cover for Single Catch Basin - (RD-L-7)-Z5-L07-ST | 3d | 2026-08-06 | 2026-08-09 | RHD4CZ5L07ST7300, RHD4PRSHLDOSST1704 |
| RHD4CZ5L07ST7500 |  | Finishing and Insulation works for Single Catch Basin - (RD-L-7)-Z5-L07-ST | 5d | 2026-08-10 | 2026-08-15 | RHD4CZ5L07ST7400 |
|  | 3383 | **RHD4-02-002-L07-(ST)-Double Catch Basin Works** |  | 2026-07-30 | 2026-08-12 |  |
| RHD4CZ5L07ST8100 |  | Excavation works for Double Catch Basin - (RD-L-7)-Z5-L07-ST | 2d | 2026-07-30 | 2026-08-01 | RHD4CZ5L07ST7100, RHD4CZ5L07ST3300, RHD4CZ5L07ST3301, RHD4ENSDZ5APPST110 |
| RHD4CZ5L07ST8200 |  | PC Blinding, Installation and Pipe connection for Double Catch Basin - (RD-L-7)-Z5-L07-ST | 2d | 2026-08-03 | 2026-08-04 | RHD4CZ5L07ST8100, RHD4CZ5L07ST7200 |
| RHD4CZ5L07ST8300 |  | Rings & C.Slab & Final Backfillfor Double Catch Basin - (RD-L-7)-Z5-L07-ST | 2d | 2026-08-06 | 2026-08-08 | RHD4CZ5L07ST8200, RHD4CZ5L07ST7300, RHD4PRSHLDOSST1304, RHD4PRSHLSTAGST1304 |
| RHD4CZ5L07ST8400 |  | Steel Cover for Double Catch Basin - (RD-L-7)-Z5-L07-ST | 2d | 2026-08-09 | 2026-08-10 | RHD4CZ5L07ST8300, RHD4CZ5L07ST7400 SS, RHD4PRSHLDOSST1704 |
| RHD4CZ5L07ST8500 |  | Finishing and Insulation works for Double Catch Basin - (RD-L-7)-Z5-L07-ST | 2d | 2026-08-11 | 2026-08-12 | RHD4CZ5L07ST8400, RHD4CZ5L07ST7500 SS |
|  | 3406 | **RHD4-02-002-Z5-L07-Sewage Network - SW** |  | 2026-08-08 | 2026-12-17 |  |
|  | 3416 | **RHD4-02-002-L07-(SW)-MH Works - 1200 mm diameter** |  | 2026-08-08 | 2026-12-17 |  |
| RHD4CZ5L07SW3100 |  | Excavation and PC Blinding works for MH 1200 mm - (RD-L-7)-Z5-L07-SW | 9d | 2026-08-08 | 2026-08-17 | RHD4ENSDZ5APPSW120, RHD4CZ5L07ST1106 |
| RHD4CZ5L07SW3200 |  | Installation of Base for MH 1200 mm - (RD-L-7)-Z5-L07-SW | 10d | 2026-08-18 | 2026-08-29 | RHD4CZ5L07SW3100 |
| RHD4CZ5L07SW3300 |  | MH Ring and C.Slab works and Backfilling works for MH 1200 mm - (RD-L-7)-Z5-L07-SW | 10d | 2026-08-30 | 2026-09-09 | RHD4CZ5L07SW3200 |
| RHD4CZ5L07SW3400 |  | Steel Cover for MH 1200 mm - (RD-L-7)-Z5-L07-SW | 7d | 2026-11-29 | 2026-12-06 | RHD4CZ5L07SW3300, RHD4PRSHLDOSSW1404, RHD4PRSHLSTAGSW1404, RHD4CZ5L016SW3400 |
| RHD4CZ5L07SW3500 |  | Finishing, Benching, Testing works for MH 1200 mm - (RD-L-7)-Z5-L07-SW | 10d | 2026-12-07 | 2026-12-17 | RHD4CZ5L07SW3400 |
|  | 3412 | **RHD4-02-002-L07-(SW)-UPVC Pipes - 200 mm diameter** |  | 2026-08-18 | 2026-09-27 |  |
| RHD4CZ5L07SW2100 |  | Excavation works for UPVC Pipe Line 200 mm - (RD-L-7)-Z5-L07-SW | 4d | 2026-08-18 | 2026-08-22 | RHD4ENSDZ5APPSW120, RHD4CZ5L07SW3100 |
| RHD4CZ5L07SW2200 |  | Bedding works for UPVC Pipe Line 200 mm - (RD-L-7)-Z5-L07-SW | 4d | 2026-08-23 | 2026-08-26 | RHD4CZ5L07SW2100 |
| RHD4CZ5L07SW2300 |  | Installing for UPVC Pipe Line 200 mm - (RD-L-7)-Z5-L07-SW | 6d | 2026-09-10 | 2026-09-16 | RHD4CZ5L07SW2200, RHD4CZ5L07SW3300 |
| RHD4CZ5L07SW2400 |  | Primary Test for UPVC Pipe Line 200 mm - (RD-L-7)-Z5-L07-SW | 3d | 2026-09-17 | 2026-09-20 | RHD4CZ5L07SW2300, RHD4CZ7L015ST1505 |
| RHD4CZ5L07SW2500 |  | Backfilling and warning tape works for UPVC Pipe Line 200 mm - (RD-L-7)-Z5-L07-SW | 5d | 2026-09-21 | 2026-09-27 | RHD4CZ5L07SW2400 |
|  | 3415 | **RHD4-02-002-L07-(SW)-Concrete Encasement** |  |  |  |  |
|  | 3443 | **RHD4-02-002-Z5-L07-Potable Network - PT** |  | 2026-09-28 | 2026-12-12 |  |
|  | 3447 | **RHD4-02-002-L07-(PT)-HDPE Pipes - 400 mm diameter** |  | 2026-09-28 | 2026-10-08 |  |
| RHD4CZ5L07PT1103 |  | Excavation works for HDPE Pipline 400 mm - (RD-L-7)-Z5-L07-PT | 2d | 2026-09-28 | 2026-09-29 | RHD4ENSDZ5APPPT130, RHD4ENMSPT2000, RHD4CZ5L07SW2500, RHD4ENMSEW2000, RHD4ENMSEW2010, RHD4ENSDZ5APPEW100 SS |
| RHD4CZ5L07PT1203 |  | Bedding works for HDPE Pipline 400 mm - (RD-L-7)-Z5-L07-PT | 2d | 2026-09-30 | 2026-10-01 | RHD4CZ5L07PT1103 |
| RHD4CZ5L07PT1303 |  | Installing for HDPE Pipline 400 mm - (RD-L-7)-Z5-L07-PT | 2d | 2026-10-03 | 2026-10-04 | RHD4CZ5L07PT1203, RHD4PRSHLDOSPT1000, RHD4PRSHLSTAGPT1000 |
| RHD4CZ5L07PT1403 |  | Primary Test for HDPE Pipline 400 mm - (RD-L-7)-Z5-L07-PT | 2d | 2026-10-05 | 2026-10-06 | RHD4CZ5L07PT1303 |
| RHD4CZ5L07PT1503 |  | Backfilling and warning tape works for HDPE Pipline 400 mm - (RD-L-7)-Z5-L07-PT | 2d | 2026-10-07 | 2026-10-08 | RHD4CZ5L07PT1403 |
|  | 2687 | **RHD4-02-002-L07-(PT)-HDPE Pipes - 110 mm diameter** |  | 2026-09-28 | 2026-10-08 |  |
| RHD4CZ5L07PT1100 |  | Excavation works for HDPE Pipline 110 mm - (RD-L-7)-Z5-L07-PT | 2d | 2026-09-28 | 2026-09-29 | RHD4CZ5L07SW2500 |
| RHD4CZ5L07PT1200 |  | Bedding works for HDPE Pipline 110 mm - (RD-L-7)-Z5-L07-PT | 2d | 2026-09-30 | 2026-10-01 | RHD4CZ5L07PT1100 |
| RHD4CZ5L07PT1300 |  | Installing for HDPE Pipline 110 mm - (RD-L-7)-Z5-L07-PT | 2d | 2026-10-03 | 2026-10-04 | RHD4CZ5L07PT1200 |

| ID | WBS | Task | Duration | Start | Finish | Predecessors |
| --- | --- | --- | --- | --- | --- | --- |
| RHD4CZ5L07PT1400 |  | Primary Test for HDPE Pipline 110 mm - (RD-L-7)-Z5-L07-PT | 2d | 2026-10-05 | 2026-10-06 | RHD4CZ5L07PT1300 |
| RHD4CZ5L07PT1500 |  | Backfilling and warning tape works for HDPE Pipline 110 mm - (RD-L-7)-Z5-L07-PT | 2d | 2026-10-07 | 2026-10-08 | RHD4CZ5L07PT1400 |
|  | 3445 | **RHD4-02-002-L07-(PT)-HDPE Pipes - 160 mm diameter** |  | 2026-09-30 | 2026-11-12 |  |
| RHD4CZ5L07PT1101 |  | Excavation works for HDPE Pipline 160 mm - (RD-L-7)-Z5-L07-PT | 8d | 2026-09-30 | 2026-10-08 | RHD4ENSDZ5APPPT130, RHD4ENMSPT2000, RHD4CZ5L07PT1103 |
| RHD4CZ5L07PT1201 |  | Bedding works for HDPE Pipline 160 mm - (RD-L-7)-Z5-L07-PT | 4d | 2026-10-10 | 2026-10-13 | RHD4CZ5L07PT1101 |
| RHD4CZ5L07PT1301 |  | Installing for HDPE Pipline 160 mm - (RD-L-7)-Z5-L07-PT | 7d | 2026-10-14 | 2026-10-21 | RHD4CZ5L07PT1201, RHD4PRSHLDOSPT1000, RHD4PRSHLSTAGPT1000 |
| RHD4CZ5L07PT1401 |  | Primary Test for HDPE Pipline 160 mm - (RD-L-7)-Z5-L07-PT | 3d | 2026-11-03 | 2026-11-05 | RHD4CZ5L07PT1301, RHD4CZ5L07PT5100 |
| RHD4CZ5L07PT1501 |  | Backfilling and warning tape works for HDPE Pipline 160 mm - (RD-L-7)-Z5-L07-PT | 6d | 2026-11-07 | 2026-11-12 | RHD4CZ5L07PT1401 |
|  | 3449 | **RHD4-02-002-L07-(PT)-Gate Valves (Direct Buried)** |  | 2026-10-20 | 2026-11-15 |  |
| RHD4CZ5L07PT3100 |  | Installation for Direct Buried Gate Valves - (RD-L-7)-Z5-L07-PT | 2d | 2026-10-20 | 2026-10-21 | RHD4CZ5L07PT1303 FF, RHD4CZ5L07PT1301 FF, RHD4CZ5L07PT1303 SS, RHD4CZ5L07PT1301 SS, RHD4PRSHLDOSPT1200, RHD4PRSHLSTAGPT1200, RHD4CZ5L07RD2100 |
| RHD4CZ5L07PT3200 |  | Stem and Service box for Direct Buried Gate Valves - (RD-L-7)-Z5-L07-PT | 2d | 2026-11-14 | 2026-11-15 | RHD4CZ5L07PT3100, RHD4CZ5L07PT1503, RHD4CZ5L07PT1501, RHD4CZ5L07PT1500 |
|  | 3450 | **RHD4-02-002-L07-(PT)-Butterfly Valve Chamber** |  | 2026-09-30 | 2026-10-08 |  |
| RHD4CZ5L07PT2100 |  | Excavation and Bedding for Butterfly Valve Chamber for Potable Water Network - (RD-L-7)-Z5-L07-PT | 2d | 2026-09-30 | 2026-10-01 | RHD4ENSDZ5APPPT130, RHD4CZ5L07PT1100 |
| RHD4CZ5L07PT2200 |  | PC works for Butterfly Valve Chamber for Potable Water Network - (RD-L-7)-Z5-L07-PT | 2d | 2026-10-03 | 2026-10-04 | RHD4CZ5L07PT2100 |
| RHD4CZ5L07PT2300 |  | Installation for Butterfly Valve Chamber for Potable Water Network - (RD-L-7)-Z5-L07-PT | 2d | 2026-10-05 | 2026-10-06 | RHD4CZ5L07PT2200, RHD4PRSHLDOSPT1100 |
| RHD4CZ5L07PT2400 |  | Backfilling works for Butterfly Valve Chamber for Potable Water Network - (RD-L-7)-Z5-L07-PT | 2d | 2026-10-07 | 2026-10-08 | RHD4CZ5L07PT2300 |
|  | 3451 | **RHD4-02-002-L07-(PT)-Butterfly Valves** |  | 2026-10-07 | 2026-10-11 |  |
| RHD4CZ5L07PT3101 |  | Installation for Butterfly Valves for Potable Water Network - (RD-L-7)-Z5-L07-PT | 2d | 2026-10-07 | 2026-10-08 | RHD4CZ5L07PT2300, RHD4PRSHLDOSPT1200, RHD4PRSHLSTAGPT1200 |
| RHD4CZ5L07PT3201 |  | Stem and Service box for Butterfly Valves for Potable Water Network - (RD-L-7)-Z5-L07-PT | 2d | 2026-10-10 | 2026-10-11 | RHD4CZ5L07PT3101, RHD4CZ5L07PT2400 |
|  | 3452 | **RHD4-02-002-L07-(PT)-Wash out Valve Chambers** |  | 2026-11-14 | 2026-11-24 |  |
| RHD4CZ5L07PT2101 |  | Excavation and Bedding for Wash out Valve Chambers for Potable Water Network - (RD-L-7)-Z5-L07-PT | 2d | 2026-11-14 | 2026-11-15 | RHD4CZ5L07PT1503, RHD4CZ5L07PT1501, RHD4ENSDZ5APPPT130 |
| RHD4CZ5L07PT2201 |  | PC works for Wash out Valve Chambers for Potable Water Network - (RD-L-7)-Z5-L07-PT | 2d | 2026-11-16 | 2026-11-17 | RHD4CZ5L07PT2101 |
| RHD4CZ5L07PT2301 |  | Installation for Wash out Valve Chambers for Potable Water Network - (RD-L-7)-Z5-L07-PT | 2d | 2026-11-18 | 2026-11-19 | RHD4CZ5L07PT2201, RHD4CZ5L07PT3201, RHD4CZ5L07PT3200 |
| RHD4CZ5L07PT2401 |  | Backfilling works for Wash out Valve Chambers for Potable Water Network - (RD-L-7)-Z5-L07-PT | 4d | 2026-11-21 | 2026-11-24 | RHD4CZ5L07PT2301 |
|  | 3453 | **RHD4-02-002-L07-(PT)-Wash out Valves** |  | 2026-11-21 | 2026-11-29 |  |
| RHD4CZ5L07PT3102 |  | Installation for Wash out Valves for Potable Water Network - (RD-L-7)-Z5-L07-PT | 4d | 2026-11-21 | 2026-11-24 | RHD4CZ5L07PT2301, RHD4PRSHLDOSPT1200, RHD4PRSHLSTAGPT1200 |
| RHD4CZ5L07PT3202 |  | Stem and Service box for Wash out Valves for Potable Water Network - (RD-L-7)-Z5-L07-PT | 4d | 2026-11-25 | 2026-11-29 | RHD4CZ5L07PT3102, RHD4CZ5L07PT2401 |
|  | 3454 | **RHD4-02-002-L07-(PT)-Air Valve Chambers** |  | 2026-11-14 | 2026-11-26 |  |
| RHD4CZ5L07PT2102 |  | Excavation and Bedding for Air Valve Chambers for Potable Water Network - (RD-L-7)-Z5-L07-PT | 2d | 2026-11-14 | 2026-11-15 | RHD4CZ5L07PT1503, RHD4CZ5L07PT1501, RHD4ENSDZ5APPPT130 |
| RHD4CZ5L07PT2202 |  | PC works for Air Valve Chambers for Potable Water Network - (RD-L-7)-Z5-L07-PT | 2d | 2026-11-16 | 2026-11-17 | RHD4CZ5L07PT2102 |
| RHD4CZ5L07PT2302 |  | Installation for Air Valve Chambers for Potable Water Network - (RD-L-7)-Z5-L07-PT | 4d | 2026-11-18 | 2026-11-22 | RHD4CZ5L07PT2202, RHD4PRSHLDOSPT1100, RHD4PRSHLDOSPT1400, RHD4PRSHLSTAGPT1100, RHD4PRSHLSTAGPT1400 |
| RHD4CZ5L07PT2402 |  | Backfilling works for Air Valve Chambers for Potable Water Network - (RD-L-7)-Z5-L07-PT | 4d | 2026-11-23 | 2026-11-26 | RHD4CZ5L07PT2302 |
|  | 3455 | **RHD4-02-002-L07-(PT)-Air Valves** |  | 2026-10-22 | 2026-11-29 |  |
| RHD4CZ5L07PT3103 |  | Installation for Air Valves for Potable Water Network - (RD-L-7)-Z5-L07-PT | 2d | 2026-10-22 | 2026-10-24 | RHD4PRSHLDOSPT1200, RHD4PRSHLSTAGPT1200, RHD4CZ5L07PT1301, RHD4CZ5L07PT1300, RHD4CZ5L07PT1303 |
| RHD4CZ5L07PT3203 |  | Stem and Service box for Air Valves for Potable Water Network - (RD-L-7)-Z5-L07-PT | 2d | 2026-11-28 | 2026-11-29 | RHD4CZ5L07PT3103, RHD4CZ5L07PT2402 |
|  | 3456 | **RHD4-02-002-L07-(PT)-Fire Hydrant** |  | 2026-11-14 | 2026-12-12 |  |
| RHD4CZ5L07PT4100 |  | Excavation and Bedding and Pipe Installation for Fire Hydrant - (RD-L-7)-Z5-L07-PT | 7d | 2026-11-14 | 2026-11-21 | RHD4CZ5L07PT1503, RHD4CZ5L07PT1501, RHD4ENSDZ5APPPT130 |
| RHD4CZ5L07PT4200 |  | Valve Installation for Fire Hydrant - (RD-L-7)-Z5-L07-PT | 5d | 2026-11-22 | 2026-11-26 | RHD4CZ5L07PT4100 |
| RHD4CZ5L07PT4300 |  | Stem for Fire Hydrant - (RD-L-7)-Z5-L07-PT | 5d | 2026-11-28 | 2026-12-02 | RHD4CZ5L07PT4200 |
| RHD4CZ5L07PT4400 |  | Fire Installation for Fire Hydrant - (RD-L-7)-Z5-L07-PT | 5d | 2026-12-03 | 2026-12-08 | RHD4CZ5L07PT4300, RHD4PRSHLDOSPT1500, RHD4PRSHLSTAGPT1500 |
| RHD4CZ5L07PT4500 |  | Protection Barriers for Fire Hydrant - (RD-L-7)-Z5-L07-PT | 3d | 2026-12-09 | 2026-12-12 | RHD4CZ5L07PT4400, RHD4CZ5L07IRR3202 |
|  | 3457 | **RHD4-02-002-L07-(PT)-Concrete Encasement** |  | 2026-10-14 | 2026-11-02 |  |
| RHD4CZ5L07PT5100 |  | Pipe Encasement for Potable Pipelines - (RD-L-7)-Z5-L07-PT | 17d | 2026-10-14 | 2026-11-02 | RHD4CZ5L07PT1303 FF, RHD4CZ5L07PT1301 FF, RHD4CZ5L07PT1303 SS, RHD4CZ5L07PT1301 SS, RHD4CZ5L07PT1203, RHD4CZ5L07PT1201 |
|  | 3458 | **RHD4-02-002-Z5-L07-Irrigation Network - IRR** |  | 2026-10-10 | 2026-11-15 |  |
|  | 3459 | **RHD4-02-002-L07-(IRR)-HDPE Pipes - 160 mm diameter** |  | 2026-10-10 | 2026-11-03 |  |
| RHD4CZ5L07IRR1100 |  | Excavation works for HDPE Pipline 160 mm - (RD-L-7)-Z5-L07-IRR | 6d | 2026-10-10 | 2026-10-15 | RHD4CZ5L07PT1101, RHD4ENSDZ5APPIRR140, RHD4ENMSRR2000, RHD4CZ5L07PT1503 |
| RHD4CZ5L07IRR1200 |  | Bedding works for HDPE Pipline 160 mm - (RD-L-7)-Z5-L07-IRR | 4d | 2026-10-17 | 2026-10-20 | RHD4CZ5L07IRR1100 |
| RHD4CZ5L07IRR1300 |  | Installing for HDPE Pipline 160 mm - (RD-L-7)-Z5-L07-IRR | 6d | 2026-10-21 | 2026-10-27 | RHD4CZ5L07IRR1200, RHD4PRSHLDOSIRR1000, RHD4PRSHLSTAGIRR1000 |
| RHD4CZ5L07IRR1400 |  | Primary Test for HDPE Pipline 160 mm - (RD-L-7)-Z5-L07-IRR | 2d | 2026-10-28 | 2026-10-29 | RHD4CZ5L07IRR1300 |
| RHD4CZ5L07IRR1500 |  | Backfilling and warning tape works for HDPE Pipline 160 mm - (RD-L-7)-Z5-L07-IRR | 4d | 2026-10-31 | 2026-11-03 | RHD4CZ5L07IRR1400 |
|  | 1770 | **RHD4-02-002-L07-(IRR)-Air Valves** |  | 2026-10-24 | 2026-10-27 |  |
| RHD4CZ5L07IRR3103 |  | Installation for Air Valves for Irrigation Network - (RD-L-7)-Z5-L07-IRR | 2d | 2026-10-24 | 2026-10-25 | RHD4CZ5L07IRR1100, RHD4CZ5L07IRR2302 |
| RHD4CZ5L07IRR3203 |  | Stem and Service box for Air Valves for Irrigation Network - (RD-L-7)-Z5-L07-IRR | 2d | 2026-10-26 | 2026-10-27 | RHD4CZ5L07IRR3103, RHD4CZ5L07IRR2402 |
|  | 1769 | **RHD4-02-002-L07-(IRR)-Air Valve Chamber** |  | 2026-10-17 | 2026-10-25 |  |
| RHD4CZ5L07IRR2102 |  | Excavation and Bedding for Valve Chamber for Irrigation Network - (RD-L-7)-Z5-L07-IRR | 2d | 2026-10-17 | 2026-10-18 | RHD4CZ5L07IRR1100 |
| RHD4CZ5L07IRR2202 |  | PC works for Valve Chamber for Irrigation Network - (RD-L-7)-Z5-L07-IRR | 2d | 2026-10-19 | 2026-10-20 | RHD4CZ5L07IRR2102 |
| RHD4CZ5L07IRR2302 |  | Installation for Valve Chamber for Irrigation Network - (RD-L-7)-Z5-L07-IRR | 2d | 2026-10-21 | 2026-10-22 | RHD4CZ5L07IRR2202 |
| RHD4CZ5L07IRR2402 |  | Backfilling works for Valve Chamber for Irrigation Network - (RD-L-7)-Z5-L07-IRR | 2d | 2026-10-24 | 2026-10-25 | RHD4CZ5L07IRR2302 |
|  | 3467 | **RHD4-02-002-L07-(IRR)-Gate Valves (Direct Buried)** |  | 2026-10-25 | 2026-11-07 |  |
| RHD4CZ5L07IRR3100 |  | Installation for Direct Buried Gate Valves - (RD-L-7)-Z5-L07-IRR | 3d | 2026-10-25 | 2026-10-27 | RHD4CZ5L07IRR1300 SS, RHD4CZ5L07IRR1300 FF, RHD4PRSHLDOSIRR1100, RHD4PRSHLSTAGIRR1100 |
| RHD4CZ5L07IRR3200 |  | Stem and Service box for Direct Buried Gate Valves - (RD-L-7)-Z5-L07-IRR | 3d | 2026-11-04 | 2026-11-07 | RHD4CZ5L07IRR3100, RHD4CZ5L07IRR1500, RHD4PRSHLDOSIRR1300, RHD4PRSHLSTAGIRR1300 |
|  | 3470 | **RHD4-02-002-L07-(IRR)-Wash out Chamber** |  | 2026-11-04 | 2026-11-12 |  |
| RHD4CZ5L07IRR2101 |  | Excavation and Bedding for Wash out Chamber for Irrigation Network - (RD-L-7)-Z5-L07-IRR | 2d | 2026-11-04 | 2026-11-05 | RHD4CZ5L07IRR1500, RHD4ENSDZ5APPIRR140 |
| RHD4CZ5L07IRR2201 |  | PC works for Wash out Chamber for Irrigation Network - (RD-L-7)-Z5-L07-IRR | 2d | 2026-11-07 | 2026-11-08 | RHD4CZ5L07IRR2101 |
| RHD4CZ5L07IRR2301 |  | Installation for Wash out Chamber for Irrigation Network - (RD-L-7)-Z5-L07-IRR | 2d | 2026-11-09 | 2026-11-10 | RHD4CZ5L07IRR2201, RHD4PRSHLDOSIRR1200, RHD4PRSHLDOSIRR1400, RHD4PRSHLSTAGIRR1200, RHD4PRSHLSTAGIRR1400 |
| RHD4CZ5L07IRR2401 |  | Backfilling works for Wash out Chamber for Irrigation Network - (RD-L-7)-Z5-L07-IRR | 2d | 2026-11-11 | 2026-11-12 | RHD4CZ5L07IRR2301 |
|  | 3471 | **RHD4-02-002-L07-(IRR)-Wash out Valves** |  | 2026-11-11 | 2026-11-15 |  |
| RHD4CZ5L07IRR3102 |  | Installation for Wash out Valve for Irrigation Network - (RD-L-7)-Z5-L07-IRR | 2d | 2026-11-11 | 2026-11-12 | RHD4CZ5L07IRR2301, RHD4PRSHLDOSIRR1100, RHD4PRSHLSTAGIRR1100 |
| RHD4CZ5L07IRR3202 |  | Stem and Service box for Wash out Valve for Irrigation Network - (RD-L-7)-Z5-L07-IRR | 2d | 2026-11-14 | 2026-11-15 | RHD4CZ5L07IRR3102, RHD4CZ5L07IRR2401, RHD4PRSHLDOSIRR1300, RHD4PRSHLSTAGIRR1300 |
|  | 3474 | **RHD4-02-002-L07-(IRR)-Concrete Encasement** |  |  |  |  |

| ID | WBS | Task | Duration | Start | Finish | Predecessors |
| --- | --- | --- | --- | --- | --- | --- |
|  | 3492 | **RHD4-02-002-Z5-L07-Medium Voltage Network - MV** |  | 2027-02-03 | 2027-04-05 |  |
|  | 3493 | **RHD4-02-002-L07-(MV)-Medium Voltage cable trench** |  | 2027-02-03 | 2027-03-02 |  |
| RHD4CZ5L07MV1100 |  | Excavation for Medium Voltage Trench - (RD-L-7)-Z5-L07-MV | 11d | 2027-02-03 | 2027-02-15 | RHD4ENSDZ5APPMV150, RHD4CZ5L07RD3100, RHD4CZ3C083ST1501, RHD4CZ3C083ST1502, RHD4CZ5A014MV1100 |
| RHD4CZ5L07MV1200 |  | Trench Backfilling for Medium Voltage Network - (RD-L-7)-Z5-L07-MV | 12d | 2027-02-16 | 2027-03-02 | RHD4CZ5L07MV1100 |
|  | 1982 | **RHD4-02-002-L07-(MV)-Medium Voltage cables 3Cx 50 mm²** |  | 2027-03-16 | 2027-03-17 |  |
| RHD4CZ5L07MV3401 |  | Termination of Medium Voltage Cables 3Cx 50 mm² - (RD-L-7)-Z5-L07-MV | 2d | 2027-03-16 | 2027-03-17 | RHD4CZ5L07MV3300 |
|  | 3494 | **RHD4-02-002-L07-(MV)-Medium Voltage duct banks** |  | 2027-02-16 | 2027-04-05 |  |
| RHD4CZ5L07MV2100 |  | Excavation of Duct Banks for Medium Voltage Network - (RD-L-7)-Z5-L07-MV | 9d | 2027-02-16 | 2027-02-27 | RHD4ENSDZ5APPMV150, RHD4CZ5L07MV1100 |
| RHD4CZ5L07MV2200 |  | Installation of Duct Banks for Medium Voltage Network - (RD-L-7)-Z5-L07-MV | 13d | 2027-02-28 | 2027-03-17 | RHD4CZ5L07MV2100, RHD4PRSHLDOSMV1000, RHD4PRSHLSTAGMV1000 |
| RHD4CZ5L07MV2300 |  | Pouring of Duct Banks for Medium Voltage Network - (RD-L-7)-Z5-L07-MV | 9d | 2027-03-18 | 2027-03-28 | RHD4CZ5L07MV2200, RHD4CTUN1Z5STG21900, RHD4CZ5L07MV3300 |
| RHD4CZ5L07MV2400 |  | Backfilling of Duct Banks for Medium Voltage Network - (RD-L-7)-Z5-L07-MV | 7d | 2027-03-29 | 2027-04-05 | RHD4CZ5L07MV2300 |
|  | 3495 | **RHD4-02-002-L07-(MV)-Medium Voltage cables 3Cx 500 mm²** |  | 2027-02-16 | 2027-03-15 |  |
| RHD4CZ5L07MV3100 |  | Installation of Medium Voltage Cables 3Cx 500 mm² - (RD-L-7)-Z5-L07-MV | 9d | 2027-02-16 | 2027-02-27 | RHD4CZ5L07MV1100, RHD4ENMSMV2000, RHD4ENMSMV2010 |
| RHD4CZ5L07MV3200 |  | Joints Installation of Medium Voltage Cables 3Cx 500 mm² - (RD-L-7)-Z5-L07-MV | 3d | 2027-02-28 | 2027-03-02 | RHD4CZ5L07MV3100, RHD4PRSHLDOSMV1300, RHD4PRSHLSTAGMV1300 |
| RHD4CZ5L07MV3300 |  | Testing of Medium Voltage Cables 3Cx 500 mm² - (RD-L-7)-Z5-L07-MV | 8d | 2027-03-03 | 2027-03-15 | RHD4CZ5L07MV3200, RHD4CZ5L07MV1200 |
|  | 1984 | **RHD4-02-002-L07-(MV)-Unit Substations** |  |  |  |  |
|  | 5388 | **RHD4-02-002-L07-(MV)-Normally open Point (Outdoor Type)** |  |  |  |  |
|  | 3499 | **RHD4-02-002-Z5-L07-Low Voltage Network - LV** |  | 2026-10-10 | 2027-04-05 |  |
|  | 3500 | **RHD4-02-002-L07-(LV)-Low Voltage duct banks** |  | 2026-10-10 | 2026-10-18 |  |
| RHD4CZ5L07LV2100 |  | Excavation of Duct Banks for Low Voltage Network - (RD-L-7)-Z5-L07-LV | 2d | 2026-10-10 | 2026-10-11 | RHD4ENSDZ5APPLV160, RHD4CZ5L07PT2400 |
| RHD4CZ5L07LV2200 |  | Installation of Duct Banks for Low Voltage Network - (RD-L-7)-Z5-L07-LV | 2d | 2026-10-12 | 2026-10-13 | RHD4CZ5L07LV2100, RHD4PRSHLDOSLV1000, RHD4PRSHLSTAGLV1000 |
| RHD4CZ5L07LV2300 |  | Pouring of Duct Banks for Low Voltage Network - (RD-L-7)-Z5-L07-LV | 2d | 2026-10-14 | 2026-10-15 | RHD4CZ5L07LV2200 |
| RHD4CZ5L07LV2400 |  | Backfilling of Duct Banks for Low Voltage Network - (RD-L-7)-Z5-L07-LV | 2d | 2026-10-17 | 2026-10-18 | RHD4CZ5L07LV2300 |
|  | 3502 | **RHD4-02-002-L07-(LV)-Low Voltage cables** |  | 2027-02-16 | 2027-03-24 |  |
| RHD4CZ5L07LV3100 |  | Excavation for Low Voltage Cables for Low Voltage Network - (RD-L-7)-Z5-L07-LV | 9d | 2027-02-16 | 2027-02-27 | RHD4ENSDZ5APPLV160, RHD4CZ5L07IRR3202, RHD4CZ5L07SW3500, RHD4CZ5L07MV1100 |
| RHD4CZ5L07LV3200 |  | Cable Laying of Low Voltage Cables for Low Voltage Network - (RD-L-7)-Z5-L07-LV | 7d | 2027-02-28 | 2027-03-07 | RHD4CZ5L07LV3100, RHD4PRSHLDOSLV1100, RHD4ENMSLV2000, RHD4ENMSLV2010, RHD4PRSHLSTAGLV1100 |
| RHD4CZ5L07LV3300 |  | Warning tape and Backfill for Low Voltage Cables for Low Voltage Network - (RD-L-7)-Z5-L07-LV | 7d | 2027-03-08 | 2027-03-18 | RHD4CZ5L07LV3200 |
| RHD4CZ5L07LV3400 |  | Testing of Low Voltage Cables for Low Voltage Network - (RD-L-7)-Z5-L07-LV | 5d | 2027-03-20 | 2027-03-24 | RHD4CZ5L07LV3300 |
|  | 3503 | **RHD4-02-002-L07-(LV)-Low Voltage Distribution Pillars** |  | 2027-03-25 | 2027-03-31 |  |
| RHD4CZ5L07LV4100 |  | Leveling for Distribution Pillars for Low Voltage Network - (RD-L-7)-Z5-L07-LV | 2d | 2027-03-25 | 2027-03-27 | RHD4CZ5L07LV3400 |
| RHD4CZ5L07LV4200 |  | Lean Concrete for Distribution Pillars for Low Voltage Network - (RD-L-7)-Z5-L07-LV | 2d | 2027-03-28 | 2027-03-29 | RHD4CZ5L07LV4100 |
| RHD4CZ5L07LV4300 |  | Installation of Distribution Pillars for Low Voltage Network - (RD-L-7)-Z5-L07-LV | 2d | 2027-03-30 | 2027-03-31 | RHD4CZ5L07LV4200, RHD4PRSHLDOSLV1200, RHD4PRSHLDOSLV1300, RHD4PRSHLSTAGLV1200, RHD4PRSHLSTAGLV1300 |
|  | 3504 | **RHD4-02-002-L07-(LV)-Low Voltage Distribution Pillars Earthing** |  |  |  |  |
|  | 4257 | **RHD4-02-002-L07-(LV)-Low Voltage Drawpit** |  | 2027-04-01 | 2027-04-05 |  |
| RHD4CZ5L07LV5100 |  | Excavation of Drawpit size 900x900x1000mm for Low Voltage Network - (RD-L-7)-Z5-L07-LV | 2d | 2027-04-01 | 2027-04-03 | RHD4CZ5L07LV2400, RHD4CZ5L07LV4300 |
| RHD4CZ5L07LV5200 |  | Installation of Drawpit size 900x900x1000mm for Low Voltage Network - (RD-L-7)-Z5-L07-LV | 2d | 2027-04-04 | 2027-04-05 | RHD4CZ5L07LV5100 |
|  | 3505 | **RHD4-02-002-Z5-L07-Street Lighting Network - SL** |  | 2026-10-12 | 2027-07-15 |  |
|  | 3506 | **RHD4-02-002-L07-(SL)-Street Lighting duct banks** |  | 2026-10-12 | 2026-10-31 |  |
| RHD4CZ5L07SL2100 |  | Excavation of Duct Banks for Street Lighting Network - (RD-L-7)-Z5-L07-SL | 4d | 2026-10-12 | 2026-10-15 | RHD4CZ5L07LV2100, RHD4ENSDZ5APPSL170 |
| RHD4CZ5L07SL2200 |  | Installation of Duct Banks for Street Lighting Network - (RD-L-7)-Z5-L07-SL | 6d | 2026-10-17 | 2026-10-22 | RHD4CZ5L07SL2100, RHD4CZ5L07LV2200, RHD4PRSHLDOSSL1000, RHD4PRSHLSTAGSL1000 |
| RHD4CZ5L07SL2300 |  | Pouring of Duct Banks for Street Lighting Network - (RD-L-7)-Z5-L07-SL | 4d | 2026-10-24 | 2026-10-27 | RHD4CZ5L07SL2200, RHD4CZ5L07LV2300 |
| RHD4CZ5L07SL2400 |  | Backfilling of Duct Banks for Street Lighting Network - (RD-L-7)-Z5-L07-SL | 3d | 2026-10-28 | 2026-10-31 | RHD4CZ5L07SL2300, RHD4CZ5L07LV2400, RHD4CZ5L07IRR3203 |
|  | 3507 | **RHD4-02-002-L07-(SL)-Street Lighting Drawpit** |  | 2027-04-06 | 2027-04-10 |  |
| RHD4CZ5L07SL5100 |  | Excavation of Drawpit size 600x600x900mm for Street Lighting Network - (RD-L-7)-Z5-L07-SL | 2d | 2027-04-06 | 2027-04-07 | RHD4CZ5L07SL2300, RHD4ENSDZ5APPSL170, RHD4CZ5L07LV5200 |
| RHD4CZ5L07SL5200 |  | Installation of Drawpit size 600x600x900mm for Street Lighting Network - (RD-L-7)-Z5-L07-SL | 2d | 2027-04-08 | 2027-04-10 | RHD4CZ5L07SL5100, RHD4PRSHLDOSSL1400, RHD4PRSHLSTAGSL1400 |
|  | 3508 | **RHD4-02-002-L07-(SL)-Street Lighting cables** |  | 2027-04-11 | 2027-05-29 |  |
| RHD4CZ5L07SL3100 |  | Excavation for Street Lighting Cables for Street Lighting Network - (RD-L-7)-Z5-L07-SL | 12d | 2027-04-11 | 2027-04-24 | RHD4ENSDZ5APPSL170, RHD4CZ5L07SL5200, RHD4CZ5L07MV3401 |
| RHD4CZ5L07SL3200 |  | Cable Laying of Street Lighting Cables for Street Lighting Network - (RD-L-7)-Z5-L07-SL | 10d | 2027-04-25 | 2027-05-05 | RHD4CZ5L07SL3100, RHD4PRSHLDOSSL1100, RHD4ENMSSL2000, RHD4ENMSSL2010, RHD4PRSHLSTAGSL1100, RHD4CZ5L07MV2400 |
| RHD4CZ5L07SL3300 |  | Warning tape and Backfill for Street Lighting Cables for Street Lighting Network - (RD-L-7)-Z5-L07-SL | 10d | 2027-05-06 | 2027-05-22 | RHD4CZ5L07SL3200 |
| RHD4CZ5L07SL3400 |  | Testing of Street Lighting Cables for Street Lighting Network - (RD-L-7)-Z5-L07-SL | 6d | 2027-05-23 | 2027-05-29 | RHD4CZ5L07SL3300 |
|  | 3509 | **RHD4-02-002-L07-(SL)-Street Lighting Poles** |  | 2027-05-30 | 2027-07-08 |  |
| RHD4CZ5L07SL1100 |  | Excavation for RC Base for Lighting Poles for Street Lighting Network - (RD-L-7)-Z5-L07-SL | 6d | 2027-05-30 | 2027-06-05 | RHD4ENSDZ5APPSL170, RHD4CZ5L07SL3400 |
| RHD4CZ5L07SL1200 |  | Installation for RC Base for Lighting Poles for Street Lighting Network - (RD-L-7)-Z5-L07-SL | 6d | 2027-06-06 | 2027-06-12 | RHD4CZ5L07SL1100 |
| RHD4CZ5L07SL1300 |  | Backfill for RC Base for Lighting Poles for Street Lighting Network - (RD-L-7)-Z5-L07-SL | 6d | 2027-06-13 | 2027-06-19 | RHD4CZ5L07SL1200 |
| RHD4CZ5L07SL1400 |  | Installation for Lighting Poles for Street Lighting Network - (RD-L-7)-Z5-L07-SL | 9d | 2027-06-20 | 2027-06-29 | RHD4CZ5L07SL1300, RHD4CZ5L07SL3400, RHD4PRSHLDOSSL1200, RHD4ENMSSL2000, RHD4ENMSSL2010, RHD4PRSHLSTAGSL1200 |
| RHD4CZ5L07SL1500 |  | Luminaire Installation for Lighting Poles for Street Lighting Network - (RD-L-7)-Z5-L07-SL | 6d | 2027-07-03 | 2027-07-08 | RHD4CZ5L07SL1400, RHD4CZ5L07SL6100, RHD4PRSHLDOSSL1300, RHD4PRSHLSTAGSL1300 |
|  | 3511 | **RHD4-02-002-L07-(SL)-Street Lighting Earthing System** |  | 2027-06-30 | 2027-07-01 |  |
| RHD4CZ5L07SL6100 |  | Installation of Earthing for Lighting Poles and Fedder Pillers for Street Lighting Network - (RD-L-7)-Z5-L07-SL | 2d | 2027-06-30 | 2027-07-01 | RHD4CZ5L07SL1400, RHD4ENMSER2000, RHD4ENMSER2010 |
|  | 5023 | **RHD4-02-002-L07-(SL)-Street Lighting Feeder Pillars** |  | 2027-07-10 | 2027-07-15 |  |
| RHD4CZ5L07SL4100 |  | Leveling for Distribution Pillars for Street Lighting Network - (RD-L-7)-Z5-L07-SL | 2d | 2027-07-10 | 2027-07-11 | RHD4CZ5L07SL1500, RHD4CZ1C081CCTV6100 |
| RHD4CZ5L07SL4200 |  | Lean Concrete for Distribution Pillars for Street Lighting Network - (RD-L-7)-Z5-L07-SL | 2d | 2027-07-12 | 2027-07-13 | RHD4CZ5L07SL4100 |
| RHD4CZ5L07SL4300 |  | Installation of Distribution Pillars for Street Lighting Network - (RD-L-7)-Z5-L07-SL | 2d | 2027-07-14 | 2027-07-15 | RHD4CZ5L07SL4200 |
|  | 3517 | **RHD4-02-002-Z5-L07-Telecommunications Network - TC** |  | 2027-07-17 | 2027-08-25 |  |
|  | 3518 | **RHD4-02-002-L07-(TC)-Telecommunications Ducts** |  | 2027-07-17 | 2027-08-25 |  |
| RHD4CZ5L07TC2100 |  | Excavation of HDPE Ducts for Telecom Network - (RD-L-7)-Z5-L07-TC | 9d | 2027-07-17 | 2027-07-26 | RHD4ENSDZ5APPTC190, RHD4CZ5L07SL4300, RHD4CZ9L06ICT5200 |
| RHD4CZ5L07TC2200 |  | Installation of HDPE Ducts for Telecom Network - (RD-L-7)-Z5-L07-TC | 13d | 2027-07-27 | 2027-08-10 | RHD4CZ5L07TC2100, RHD4PRSHLDOSTC1000, RHD4PRSHLSTAGTC1000 |
| RHD4CZ5L07TC2400 |  | Backfilling of HDPE Ducts for Telecom Network - (RD-L-7)-Z5-L07-TC | 9d | 2027-08-16 | 2027-08-25 | RHD4CZ5L07TC2200, RHD4CZ5L07TC5200, RHD4CZ5L07SL1500, RHD4CZ4CH5ST1320, RHD4CZ7A012ICT5200 |
|  | 3519 | **RHD4-02-002-L07-(TC)-Telecommunications Manholes** |  | 2027-07-27 | 2027-08-15 |  |
| RHD4CZ5L07TC5100 |  | Excavation for Manholes for Telecom Network - (RD-L-7)-Z5-L07-TC | 6d | 2027-07-27 | 2027-08-02 | RHD4CZ5L07TC2100, RHD4ENSDZ5APPTC190, RHD4CZ4A013RD7100 |
| RHD4CZ5L07TC5200 |  | Installation of Manholes for Telecom Network - (RD-L-7)-Z5-L07-TC | 7d | 2027-08-08 | 2027-08-15 | RHD4CZ5L07TC5100, RHD4CZ5L07TC2200 SS, RHD4PRSHLDOSTC1200, RHD4PRSHLSTAGTC1200, RHD4CZ1C081RD8100 |

| ID | WBS | Task | Duration | Start | Finish | Predecessors |
| --- | --- | --- | --- | --- | --- | --- |
|  | 3520 | **RHD4-02-002-L07-(TC)-Telecomminications Road Crossings** |  |  |  |  |
|  | 3521 | **RHD4-02-002-Z5-L07-Information and Communication Technologies - ICT** |  | 2026-07-14 | 2027-10-14 |  |
|  | 3522 | **RHD4-02-002-L07-(ICT)-Information and Communication Technologies Ducts** |  | 2027-08-26 | 2027-10-14 |  |
| RHD4CZ5L07ICT2100 |  | Excavation of HDPE Ducts for ICT Network - (RD-L-7)-Z5-L07-ICT | 12d | 2027-08-26 | 2027-09-08 | RHD4CZ5L07ICT3400, RHD4ENSDZ5APPICT200, RHD4CZ5L07TC2400, RHD4CZ5L07TC5200, RHD4GNSLZ8FT1600, RHD4GNSLZ1FT1600 |
| RHD4CZ5L07ICT2200 |  | Installation of HDPE Ducts for ICT Network - (RD-L-7)-Z5-L07-ICT | 18d | 2027-09-09 | 2027-09-30 | RHD4CZ5L07ICT2100, RHD4PRSHLDOSICT1000, RHD4PRSHLSTAGICT1000, RHD4CZ8C014RD3200 |
| RHD4CZ5L07ICT2400 |  | Backfilling of HDPE Ducts for ICT Network - (RD-L-7)-Z5-L07-ICT | 12d | 2027-10-02 | 2027-10-14 | RHD4CZ5L07ICT2200, RHD4CZ5L07ICT5200, RHD4GNLVZ8FT1500, RHD4GNCCTVZ6FT2000, RHD4CZ5A014CCTV1500 |
|  | 3523 | **RHD4-02-002-L07-(ICT)-Information and Communication Technologies Manholes** |  | 2027-09-09 | 2027-09-22 |  |
| RHD4CZ5L07ICT5100 |  | Excavation for Manholes for ICT Network - (RD-L-7)-Z5-L07-ICT | 6d | 2027-09-09 | 2027-09-15 | RHD4CZ5L07ICT2100, RHD4ENSDZ5APPICT200 |
| RHD4CZ5L07ICT5200 |  | Installation of Manholes for ICT Network - (RD-L-7)-Z5-L07-ICT | 6d | 2027-09-16 | 2027-09-22 | RHD4CZ5L07ICT5100, RHD4CZ5L07ICT2200 SS, RHD4PRSHLDOSICT1200, RHD4PRSHLSTAGICT1200 |
|  | 3524 | **RHD4-02-002-L07-(ICT)-Information and Communication Technologies Road Crossings** |  | 2026-07-14 | 2026-08-29 |  |
| RHD4CZ5L07ICT3100 |  | Excavation for Road Crossings for ICT Network - (RD-L-7)-Z5-L07-ICT | 3d | 2026-07-14 | 2026-07-16 | RHD4ENSDZ5APPICT200, RHD4CZ5L07ST3101 |
| RHD4CZ5L07ICT3200 |  | Installation of Road Crossings for ICT Network - (RD-L-7)-Z5-L07-ICT | 4d | 2026-08-17 | 2026-08-20 | RHD4CZ5L07ICT3100, RHD4PRSHLDOSICT1100, RHD4PRSHLSTAGICT1100 |
| RHD4CZ5L07ICT3300 |  | Pouring of Road Crossings for ICT Network - (RD-L-7)-Z5-L07-ICT | 4d | 2026-08-22 | 2026-08-25 | RHD4CZ5L07ICT3200 |
| RHD4CZ5L07ICT3400 |  | Backfilling of Road Crossings for ICT Network - (RD-L-7)-Z5-L07-ICT | 3d | 2026-08-26 | 2026-08-29 | RHD4CZ5L07ICT3300 |
|  | 3512 | **RHD4-02-002-Z5-L07-Landscape Network - LS** |  |  |  |  |
|  | 3513 | **RHD4-02-002-L07-(LS)-Landscape Lighting cables** |  |  |  |  |
|  | 3514 | **RHD4-02-002-L07-(LS)-Landscape Feeder Pillars** |  |  |  |  |
|  | 3515 | **RHD4-02-002-L07-(LS)-Landscape Bollard Poles** |  |  |  |  |
|  | 3516 | **RHD4-02-002-L07-(LS)-Landscape Feeder Pillars Earthing** |  |  |  |  |
|  | 3525 | **RHD4-02-002-Z5-L07-Security Network - CCTV** |  | 2027-10-16 | 2027-11-16 |  |
|  | 3526 | **RHD4-02-002-L07-(CCTV)-Civil Works** |  | 2027-10-16 | 2027-10-26 |  |
| RHD4CZ5L07CCTV2100 |  | Civil Works for Security Network - (RD-L-7)-Z5-L07-CCTV | 10d | 2027-10-16 | 2027-10-26 | RHD4CZ5L07TC2400, RHD4CZ5L07ICT2400 |
|  | 3527 | **RHD4-02-002-L07-(CCTV)-CCTV Poles** |  | 2027-10-27 | 2027-11-07 |  |
| RHD4CZ5L07CCTV1100 |  | Excavation for RC Base for CCTV Poles for Security Network - (RD-L-7)-Z5-L07-CCTV | 2d | 2027-10-27 | 2027-10-28 | RHD4CZ5L07CCTV2100, RHD4ENSDZ5APPCCTV210 |
| RHD4CZ5L07CCTV1200 |  | Installation for RC Base for CCTV Poles for Security Network - (RD-L-7)-Z5-L07-CCTV | 2d | 2027-10-30 | 2027-10-31 | RHD4CZ5L07CCTV1100 |
| RHD4CZ5L07CCTV1300 |  | Backfill for RC Base for CCTV Poles for Security Network - (RD-L-7)-Z5-L07-CCTV | 2d | 2027-11-01 | 2027-11-02 | RHD4CZ5L07CCTV1200 |
| RHD4CZ5L07CCTV1400 |  | Installation for CCTV Poles for Security Network - (RD-L-7)-Z5-L07-CCTV | 2d | 2027-11-03 | 2027-11-04 | RHD4CZ5L07CCTV1300, RHD4PRSHLDOSCCTV1000, RHD4PRSHLSTACCTV1000 |
| RHD4CZ5L07CCTV1500 |  | Protection post Installation for CCTV Poles for Security Network - (RD-L-7)-Z5-L07-CCTV | 2d | 2027-11-06 | 2027-11-07 | RHD4CZ5L07CCTV1400 |
|  | 3528 | **RHD4-02-002-L07-(CCTV)-Camera** |  | 2027-11-08 | 2027-11-09 |  |
| RHD4CZ5L07CCTV3100 |  | Installation for Cameras for Security Network - (RD-L-7)-Z5-L07-CCTV | 2d | 2027-11-08 | 2027-11-09 | RHD4CZ5L07CCTV1400, RHD4CZ5L07CCTV4100, RHD4PRSHLDOSCCTV1100, RHD4PRSHLSTACCTV1100, RHD4CZ6A02CCTV6100 |
|  | 3529 | **RHD4-02-002-L07-(CCTV)-Power and Infrastructure** |  | 2027-11-06 | 2027-11-09 |  |
| RHD4CZ5L07CCTV4100 |  | Installation of Power outlet, UPS and midspan for PTZ Camerafor Cameras for Security Network - (RD-L-7)-Z5-L07-CCTV | 2d | 2027-11-06 | 2027-11-07 | RHD4CZ5L07CCTV1400, RHD4PRSHLDOSCCTV1300, RHD4PRSHLSTACCTV1300, RHD4HOASZ6APPSL170, RHD4CZ9L02CCTV6100 |
| RHD4CZ5L07CCTV4200 |  | Short Range Wireless PoP wireless Bridgefor CCTV Poles for Security Network - (RD-L-7)-Z5-L07-CCTV | 2d | 2027-11-08 | 2027-11-09 | RHD4CZ5L07CCTV4100 |
|  | 3531 | **RHD4-02-002-L07-(CCTV)-CCTV Panels and Components** |  | 2027-11-10 | 2027-11-16 |  |
| RHD4CZ5L07CCTV6100 |  | Installation for CCTV Panels for Security Network - (RD-L-7)-Z5-L07-CCTV | 6d | 2027-11-10 | 2027-11-16 | RHD4CZ5L07CCTV4200, RHD4CZ5L07CCTV3100, RHD4PRSHLDOSCCTV1200, RHD4PRSHLSTACCTV1200, RHD4PRLOLSTACCTV1001 |
|  | 2217 | **RHD4-02-002-Z4** |  | 2026-08-10 | 2027-09-16 |  |
|  | 8270 | **RHD4-02-002-Z4-L01** |  | 2026-08-31 | 2027-04-24 |  |
|  | 8301 | **RHD4-02-002-Z4-L01-Crossings Sewage Network - SWCr** |  |  |  |  |
|  | 8311 | **RHD4-02-002-L01-(SWCr)-MH Works - 1200 mm diameter** |  |  |  |  |
|  | 8312 | **RHD4-02-002-L01-(SWCr)-MH Works - 1200 mm diameter with Back drop** |  |  |  |  |
|  | 8307 | **RHD4-02-002-L01-(SWCr)-UPVC Pipes - 200 mm diameter** |  |  |  |  |
|  | 8345 | **RHD4-02-002-Z4-L01-Crossings Potable Network - PTCr** |  |  |  |  |
|  | 8347 | **RHD4-02-002-L01-(PTCr)-HDPE Pipes - 160 mm diameter** |  |  |  |  |
|  | 8346 | **RHD4-02-002-L01-(PTCr)-HDPE Pipes - 110 mm diameter** |  |  |  |  |
|  | 8351 | **RHD4-02-002-L01-(PTCr)-Gate Valves (Direct Buried)** |  |  |  |  |
|  | 8392 | **RHD4-02-002-Z4-L01-Crossings Irrigation Network - IRRC** |  |  |  |  |
|  | 8393 | **RHD4-02-002-L01-(IRRC)-HDPE Pipes - 160 mm diameter** |  |  |  |  |
|  | 8401 | **RHD4-02-002-L01-(IRRC)-Gate Valves (Direct Buried)** |  |  |  |  |
|  | 8404 | **RHD4-02-002-L01-(IRRC)-Wash out Chamber** |  |  |  |  |
|  | 8405 | **RHD4-02-002-L01-(IRRC)-Wash out Valves** |  |  |  |  |
|  | 8449 | **RHD4-02-002-Z4-L01-Road Works - RD** |  | 2026-09-12 | 2027-04-08 |  |
|  | 8450 | **RHD4-02-002-L01-(RD)-Subgrade** |  | 2026-09-12 | 2026-09-13 |  |
| RHD4CZ4L01RD1100 |  | Supply, lay and compaction subgrade compacted thickness 300 mm for Roads - (RD-L-1)-Z4-L01-RD | 2d | 2026-09-12 | 2026-09-13 | RHD4ENSDZ8APPEW100, RHD4ENSDZ8APPRD220, RHD4CZ4L01MV2400, RHD4CZ4L01LV2400 |
|  | 8451 | **RHD4-02-002-L01-(RD)-Aggregate Base Course** |  | 2026-09-14 | 2026-09-15 |  |
| RHD4CZ4L01RD2100 |  | Supply, lay and compaction Aggregate base course compacted thickness 300 mmfor Roads - (RD-L-1)-Z4-L01-RD | 2d | 2026-09-14 | 2026-09-15 | RHD4CZ4L01RD1100, RHD4PRSHLDOSRD1000, RHD4PRSHLSTAGRD1000 |
|  | 8452 | **RHD4-02-002-L01-(RD)-Bituminous base course Two Layers, including (MC1)&(RC2)** |  | 2026-09-16 | 2027-03-27 |  |
| RHD4CZ4L01RD3100 |  | Supply, lay and Asphaltic base course including Prime Coat (MC1) for 1st Layer - (RD-L-1)-Z4-L01-RD | 2d | 2026-09-16 | 2026-09-17 | RHD4CZ4L01RD2100, RHD4PRSHLDOSRD1100, RHD4ENMSASPH2000, RHD4ENMSASPH2010, RHD4PRSHLSTAGRD1100, RHD4CZ4C012RD3100, RHD4CZ4RA02RD2100 |
| RHD4CZ4L01RD3200 |  | Supply, lay and Asphaltic base course including Tack Coat (RC2) for 2nd Layer - (RD-L-1)-Z4-L01-RD | 2d | 2027-03-25 | 2027-03-27 | RHD4CZ4L01RD3100, RHD4PRSHLDOSRD1100, RHD4PRSHLSTAGRD1100, RHD4CZ4L01CCTV2100 |
|  | 8454 | **RHD4-02-002-L01-(RD)-Precast Concrete Curb** |  | 2027-03-28 | 2027-04-01 |  |
| RHD4CZ4L01RD5100 |  | Supply and installation Precast Concrete Kerb for Roads - (RD-L-1)-Z4-L01-RD | 5d | 2027-03-28 | 2027-04-01 | RHD4CZ4L01RD3200, RHD4PRSHLDOSRD1200, RHD4ENMSRD2000, RHD4ENMSRD2010, RHD4PRSHLSTAGRD1200 |
|  | 8457 | **RHD4-02-002-L01-(RD)-Traffic Signage** |  | 2027-04-03 | 2027-04-08 |  |
| RHD4CZ4L01RD8100 |  | Installation of Traffic Signage for Road Network - (RD-L-1)-Z4-L01-RD | 6d | 2027-04-03 | 2027-04-08 | RHD4CZ4L01RD5100, RHD4CZ4L01TC2400, RHD4CZ4L01ICT2400, RHD4PRSHLDOSRD1600, RHD4PRSHLSTAGRD1600, RHD4CZ4L01SL5200 |
|  | 8455 | **RHD4-02-002-L01-(RD)-Precast Interlocking Block Pavers** |  |  |  |  |
|  | 8453 | **RHD4-02-002-L01-(RD)-Bituminous concrete wearing course including tack coat (RC2)** |  | 2027-04-03 | 2027-04-04 |  |
| RHD4CZ4L01RD4100 |  | Supply, lay and compaction Asphaltic wearing course including tack Coat (RC2)for Road Network - (RD-L-1)-Z4-L01-RD | 2d | 2027-04-03 | 2027-04-04 | RHD4CZ4L01RD5100 |
|  | 8456 | **RHD4-02-002-L01-(RD)-Pavement Marking** |  | 2027-04-05 | 2027-04-08 |  |
| RHD4CZ4L01RD7100 |  | Pavement Markings for Road Network - (RD-L-1)-Z4-L01-RD | 4d | 2027-04-05 | 2027-04-08 | RHD4CZ4L01RD4100, RHD4PRSHLDOSRD1500, RHD4PRSHLSTAGRD1500 |
|  | 8274 | **RHD4-02-002-Z4-L01-Storm Network - ST** |  |  |  |  |
|  | 8291 | **RHD4-02-002-L01-(ST)-MH Works - 1200 mm diameter** |  |  |  |  |
|  | 8293 | **RHD4-02-002-L01-(ST)-MH Works - 2000 mm diameter** |  |  |  |  |

| ID | WBS | Task | Duration | Start | Finish | Predecessors |
| --- | --- | --- | --- | --- | --- | --- |
|  | 8282 | **RHD4-02-002-L01-(ST)-GRP Pipes - 1100 mm diameter** |  |  |  |  |
|  | 8276 | **RHD4-02-002-L01-(ST)-GRP Pipes - 500 mm diameter** |  |  |  |  |
|  | 8275 | **RHD4-02-002-L01-(ST)-GRP Pipes - 400 mm diameter** |  |  |  |  |
|  | 8289 | **RHD4-02-002-L01-(ST)-UPVC Pipes - 300 mm diameter** |  |  |  |  |
|  | 8297 | **RHD4-02-002-L01-(ST)-Concrete Encasement** |  |  |  |  |
|  | 8298 | **RHD4-02-002-Z4-L01-Catch Basin - ST** |  |  |  |  |
|  | 8299 | **RHD4-02-002-L01-(ST)-Single Catch Basin Works** |  |  |  |  |
|  | 8323 | **RHD4-02-002-Z4-L01-Sewage Network - SW** |  |  |  |  |
|  | 8333 | **RHD4-02-002-L01-(SW)-MH Works - 1200 mm diameter** |  |  |  |  |
|  | 8329 | **RHD4-02-002-L01-(SW)-UPVC Pipes - 200 mm diameter** |  |  |  |  |
|  | 8360 | **RHD4-02-002-Z4-L01-Potable Network - PT** |  | 2026-12-28 | 2027-01-21 |  |
|  | 8362 | **RHD4-02-002-L01-(PT)-HDPE Pipes - 160 mm diameter** |  | 2026-12-28 | 2027-01-10 |  |
| RHD4CZ4L01PT1101 |  | Excavation works for HDPE Pipline 160 mm - (RD-L-1)-Z4-L01-PT | 2d | 2026-12-28 | 2026-12-29 | RHD4ENSDZ8APPPT130, RHD4ENMSPT2000, RHD4CZ4A013PT1103, RHD4CZ3C083PT3202 |
| RHD4CZ4L01PT1201 |  | Bedding works for HDPE Pipline 160 mm - (RD-L-1)-Z4-L01-PT | 2d | 2026-12-30 | 2026-12-31 | RHD4CZ4L01PT1101 |
| RHD4CZ4L01PT1301 |  | Installing for HDPE Pipline 160 mm - (RD-L-1)-Z4-L01-PT | 2d | 2027-01-02 | 2027-01-03 | RHD4CZ4L01PT1201, RHD4PRSHLDOSPT1000, RHD4PRSHLSTAGPT1000 |
| RHD4CZ4L01PT1401 |  | Primary Test for HDPE Pipline 160 mm - (RD-L-1)-Z4-L01-PT | 2d | 2027-01-06 | 2027-01-07 | RHD4CZ4L01PT1301, RHD4CZ4L01PT3100 |
| RHD4CZ4L01PT1501 |  | Backfilling and warning tape works for HDPE Pipline 160 mm - (RD-L-1)-Z4-L01-PT | 2d | 2027-01-09 | 2027-01-10 | RHD4CZ4L01PT1401 |
|  | 8366 | **RHD4-02-002-L01-(PT)-Gate Valves (Direct Buried)** |  | 2027-01-04 | 2027-01-12 |  |
| RHD4CZ4L01PT3100 |  | Installation for Direct Buried Gate Valves - (RD-L-1)-Z4-L01-PT | 2d | 2027-01-04 | 2027-01-05 | RHD4CZ4L01PT1301, RHD4PRSHLDOSPT1200, RHD4PRSHLSTAGPT1200 |
| RHD4CZ4L01PT3200 |  | Stem and Service box for Direct Buried Gate Valves - (RD-L-1)-Z4-L01-PT | 2d | 2027-01-11 | 2027-01-12 | RHD4CZ4L01PT3100, RHD4CZ4L01PT1501, RHD4PRSHLDOSPT1300 |
|  | 8369 | **RHD4-02-002-L01-(PT)-Wash out Valve Chambers** |  |  |  |  |
|  | 8370 | **RHD4-02-002-L01-(PT)-Wash out Valves** |  |  |  |  |
|  | 8371 | **RHD4-02-002-L01-(PT)-Air Valve Chambers** |  |  |  |  |
|  | 8372 | **RHD4-02-002-L01-(PT)-Air Valves** |  |  |  |  |
|  | 8373 | **RHD4-02-002-L01-(PT)-Fire Hydrant** |  | 2027-01-11 | 2027-01-21 |  |
| RHD4CZ4L01PT4100 |  | Excavation and Bedding and Pipe Installation for Fire Hydrant - (RD-L-1)-Z4-L01-PT | 2d | 2027-01-11 | 2027-01-12 | RHD4CZ4L01PT1501, RHD4ENSDZ8APPPT130 |
| RHD4CZ4L01PT4200 |  | Valve Installation for Fire Hydrant - (RD-L-1)-Z4-L01-PT | 2d | 2027-01-13 | 2027-01-14 | RHD4CZ4L01PT4100 |
| RHD4CZ4L01PT4300 |  | Stem for Fire Hydrant - (RD-L-1)-Z4-L01-PT | 2d | 2027-01-16 | 2027-01-17 | RHD4CZ4L01PT4200 |
| RHD4CZ4L01PT4400 |  | Fire Installation for Fire Hydrant - (RD-L-1)-Z4-L01-PT | 2d | 2027-01-18 | 2027-01-19 | RHD4CZ4L01PT4300, RHD4PRSHLDOSPT1500, RHD4PRSHLSTAGPT1500 |
| RHD4CZ4L01PT4500 |  | Protection Barriers for Fire Hydrant - (RD-L-1)-Z4-L01-PT | 2d | 2027-01-20 | 2027-01-21 | RHD4CZ4L01PT4400 |
|  | 8375 | **RHD4-02-002-Z4-L01-Irrigation Network - IRR** |  |  |  |  |
|  | 8376 | **RHD4-02-002-L01-(IRR)-HDPE Pipes - 160 mm diameter** |  |  |  |  |
|  | 8384 | **RHD4-02-002-L01-(IRR)-Gate Valves (Direct Buried)** |  |  |  |  |
|  | 8389 | **RHD4-02-002-L01-(IRR)-Air Valve Chamber** |  |  |  |  |
|  | 8390 | **RHD4-02-002-L01-(IRR)-Air Valves** |  |  |  |  |
|  | 8409 | **RHD4-02-002-Z4-L01-Medium Voltage Network - MV** |  | 2026-08-31 | 2026-10-06 |  |
|  | 8410 | **RHD4-02-002-L01-(MV)-Medium Voltage cable trench** |  | 2026-09-19 | 2026-10-04 |  |
| RHD4CZ4L01MV1100 |  | Excavation for Medium Voltage Trench - (RD-L-1)-Z4-L01-MV | 2d | 2026-09-19 | 2026-09-20 | RHD4ENSDZ8APPMV150, RHD4CZ4L01RD3100 |
| RHD4CZ4L01MV1200 |  | Trench Backfilling for Medium Voltage Network - (RD-L-1)-Z4-L01-MV | 2d | 2026-10-03 | 2026-10-04 | RHD4CZ4L01MV3200 |
|  | 8411 | **RHD4-02-002-L01-(MV)-Medium Voltage duct banks** |  | 2026-08-31 | 2026-09-09 |  |
| RHD4CZ4L01MV2100 |  | Excavation of Duct Banks for Medium Voltage Network - (RD-L-1)-Z4-L01-MV | 2d | 2026-08-31 | 2026-09-01 | RHD4ENSDZ8APPMV150, RHD4CZ3C083ST1102 |
| RHD4CZ4L01MV2200 |  | Installation of Duct Banks for Medium Voltage Network - (RD-L-1)-Z4-L01-MV | 3d | 2026-09-02 | 2026-09-05 | RHD4CZ4L01MV2100, RHD4PRSHLDOSMV1000, RHD4PRSHLSTAGMV1000 |
| RHD4CZ4L01MV2300 |  | Pouring of Duct Banks for Medium Voltage Network - (RD-L-1)-Z4-L01-MV | 2d | 2026-09-06 | 2026-09-07 | RHD4CZ4L01MV2200 |
| RHD4CZ4L01MV2400 |  | Backfilling of Duct Banks for Medium Voltage Network - (RD-L-1)-Z4-L01-MV | 2d | 2026-09-08 | 2026-09-09 | RHD4CZ4L01MV2300 |
|  | 8412 | **RHD4-02-002-L01-(MV)-Medium Voltage cables 3Cx 500 mm²** |  | 2026-09-21 | 2026-10-06 |  |
| RHD4CZ4L01MV3100 |  | Installation of Medium Voltage Cables 3Cx 500 mm² - (RD-L-1)-Z4-L01-MV | 7d | 2026-09-21 | 2026-09-29 | RHD4CZ4L01MV1100, RHD4PRSHLDOSMV1100, RHD4ENMSMV2000, RHD4ENMSMV2010, RHD4PRSHLSTAGMV1100 |
| RHD4CZ4L01MV3200 |  | Joints Installation of Medium Voltage Cables 3Cx 500 mm² - (RD-L-1)-Z4-L01-MV | 2d | 2026-09-30 | 2026-10-01 | RHD4CZ4L01MV3100, RHD4PRSHLDOSMV1300, RHD4PRSHLSTAGMV1300 |
| RHD4CZ4L01MV3300 |  | Testing of Medium Voltage Cables 3Cx 500 mm² - (RD-L-1)-Z4-L01-MV | 2d | 2026-10-05 | 2026-10-06 | RHD4CZ4L01MV3200, RHD4CZ4L01MV1200 |
|  | 8413 | **RHD4-02-002-L01-(MV)-Medium Voltage cables 3Cx 50 mm²** |  |  |  |  |
|  | 8414 | **RHD4-02-002-L01-(MV)-Normally open Point (Outdoor Type)** |  |  |  |  |
|  | 8416 | **RHD4-02-002-Z4-L01-Low Voltage Network - LV** |  | 2026-09-02 | 2027-02-27 |  |
|  | 8417 | **RHD4-02-002-L01-(LV)-Low Voltage duct banks** |  | 2026-09-02 | 2026-09-10 |  |
| RHD4CZ4L01LV2100 |  | Excavation of Duct Banks for Low Voltage Network - (RD-L-1)-Z4-L01-LV | 2d | 2026-09-02 | 2026-09-03 | RHD4ENSDZ8APPLV160, RHD4CZ4L01MV2100 |
| RHD4CZ4L01LV2200 |  | Installation of Duct Banks for Low Voltage Network - (RD-L-1)-Z4-L01-LV | 2d | 2026-09-05 | 2026-09-06 | RHD4CZ4L01LV2100, RHD4PRSHLDOSLV1000, RHD4PRSHLSTAGLV1000 |
| RHD4CZ4L01LV2300 |  | Pouring of Duct Banks for Low Voltage Network - (RD-L-1)-Z4-L01-LV | 2d | 2026-09-07 | 2026-09-08 | RHD4CZ4L01LV2200 |
| RHD4CZ4L01LV2400 |  | Backfilling of Duct Banks for Low Voltage Network - (RD-L-1)-Z4-L01-LV | 2d | 2026-09-09 | 2026-09-10 | RHD4CZ4L01LV2300 |
|  | 8419 | **RHD4-02-002-L01-(LV)-Low Voltage cables** |  | 2027-02-17 | 2027-02-27 |  |
| RHD4CZ4L01LV3100 |  | Excavation for Low Voltage Cables for Low Voltage Network - (RD-L-1)-Z4-L01-LV | 2d | 2027-02-17 | 2027-02-18 | RHD4CZ4L01LV2400, RHD4CZ4L01MV1200, RHD4ENSDZ8APPLV160, RHD4CZ4L01SL3300 |
| RHD4CZ4L01LV3200 |  | Cable Laying of Low Voltage Cables for Low Voltage Network - (RD-L-1)-Z4-L01-LV | 2d | 2027-02-20 | 2027-02-21 | RHD4CZ4L01LV3100, RHD4PRSHLDOSLV1100, RHD4ENMSLV2000, RHD4ENMSLV2010, RHD4PRSHLSTAGLV1100 |
| RHD4CZ4L01LV3300 |  | Warning tape and Backfill for Low Voltage Cables for Low Voltage Network - (RD-L-1)-Z4-L01-LV | 2d | 2027-02-23 | 2027-02-24 | RHD4CZ4L01LV3200 |
| RHD4CZ4L01LV3400 |  | Testing of Low Voltage Cables for Low Voltage Network - (RD-L-1)-Z4-L01-LV | 2d | 2027-02-25 | 2027-02-27 | RHD4CZ4L01LV3300 |
|  | 8422 | **RHD4-02-002-Z4-L01-Street Lighting Network - SL** |  | 2027-01-13 | 2027-03-08 |  |
|  | 8423 | **RHD4-02-002-L01-(SL)-Street Lighting duct banks** |  | 2027-01-13 | 2027-01-21 |  |
| RHD4CZ4L01SL2100 |  | Excavation of Duct Banks for Street Lighting Network - (RD-L-1)-Z4-L01-SL | 2d | 2027-01-13 | 2027-01-14 | RHD4CZ4L01LV2100, RHD4ENSDZ8APPSL170, RHD4CZ4L01PT3200 |
| RHD4CZ4L01SL2200 |  | Installation of Duct Banks for Street Lighting Network - (RD-L-1)-Z4-L01-SL | 2d | 2027-01-16 | 2027-01-17 | RHD4CZ4L01SL2100, RHD4PRSHLDOSSL1000, RHD4PRSHLSTAGSL1000 |
| RHD4CZ4L01SL2300 |  | Pouring of Duct Banks for Street Lighting Network - (RD-L-1)-Z4-L01-SL | 2d | 2027-01-18 | 2027-01-19 | RHD4CZ4L01SL2200 |
| RHD4CZ4L01SL2400 |  | Backfilling of Duct Banks for Street Lighting Network - (RD-L-1)-Z4-L01-SL | 2d | 2027-01-20 | 2027-01-21 | RHD4CZ4L01SL2300, RHD4CZ4L01LV2400 |
|  | 8424 | **RHD4-02-002-L01-(SL)-Street Lighting Drawpit** |  | 2027-03-04 | 2027-03-08 |  |
| RHD4CZ4L01SL5100 |  | Excavation of Drawpit size 600x600x900mm for Street Lighting Network - (RD-L-1)-Z4-L01-SL | 2d | 2027-03-04 | 2027-03-06 | RHD4ENSDZ8APPSL170, RHD4CZ4L01SL1400 |
| RHD4CZ4L01SL5200 |  | Installation of Drawpit size 600x600x900mm for Street Lighting Network - (RD-L-1)-Z4-L01-SL | 2d | 2027-03-07 | 2027-03-08 | RHD4CZ4L01SL5100, RHD4PRSHLDOSSL1400, RHD4PRSHLSTAGSL1400, RHD4CZ4A013ST1503 |

| ID | WBS | Task | Duration | Start | Finish | Predecessors |
| --- | --- | --- | --- | --- | --- | --- |
|  | 8425 | **RHD4-02-002-L01-(SL)-Street Lighting cables** |  | 2027-02-10 | 2027-03-01 |  |
| RHD4CZ4L01SL3100 |  | Excavation for Street Lighting Cables for Street Lighting Network - (RD-L-1)-Z4-L01-SL | 2d | 2027-02-10 | 2027-02-11 | RHD4CZ4L01SL1300, RHD4ENSDZ8APPSL170 |
| RHD4CZ4L01SL3200 |  | Cable Laying of Street Lighting Cables for Street Lighting Network - (RD-L-1)-Z4-L01-SL | 2d | 2027-02-13 | 2027-02-14 | RHD4CZ4L01SL3100, RHD4PRSHLDOSSL1100, RHD4ENMSSL2000, RHD4ENMSSL2010, RHD4PRSHLSTAGSL1100 |
| RHD4CZ4L01SL3300 |  | Warning tape and Backfill for Street Lighting Cables for Street Lighting Network - (RD-L-1)-Z4-L01-SL | 2d | 2027-02-15 | 2027-02-16 | RHD4CZ4L01SL3200 |
| RHD4CZ4L01SL3400 |  | Testing of Street Lighting Cables for Street Lighting Network - (RD-L-1)-Z4-L01-SL | 2d | 2027-02-28 | 2027-03-01 | RHD4CZ4L01SL3300, RHD4CZ4L01LV3400 |
|  | 8426 | **RHD4-02-002-L01-(SL)-Street Lighting Poles** |  | 2027-02-03 | 2027-03-06 |  |
| RHD4CZ4L01SL1100 |  | Excavation for RC Base for Lighting Poles for Street Lighting Network - (RD-L-1)-Z4-L01-SL | 2d | 2027-02-03 | 2027-02-04 | RHD4CZ4L01SL2400, RHD4CZ4L01MV1200, RHD4ENSDZ8APPSL170, RHD4CZ3C083SL1100 |
| RHD4CZ4L01SL1200 |  | Installation for RC Base for Lighting Poles for Street Lighting Network - (RD-L-1)-Z4-L01-SL | 2d | 2027-02-06 | 2027-02-07 | RHD4CZ4L01SL1100 |
| RHD4CZ4L01SL1300 |  | Backfill for RC Base for Lighting Poles for Street Lighting Network - (RD-L-1)-Z4-L01-SL | 2d | 2027-02-08 | 2027-02-09 | RHD4CZ4L01SL1200 |
| RHD4CZ4L01SL1400 |  | Installation for Lighting Poles for Street Lighting Network - (RD-L-1)-Z4-L01-SL | 2d | 2027-03-02 | 2027-03-03 | RHD4CZ4L01SL1300, RHD4CZ4L01SL3400, RHD4PRSHLDOSSL1200, RHD4ENMSSL2000, RHD4ENMSSL2010, RHD4PRSHLSTAGSL1200 |
| RHD4CZ4L01SL1500 |  | Luminaire Installation for Lighting Poles for Street Lighting Network - (RD-L-1)-Z4-L01-SL | 2d | 2027-03-04 | 2027-03-06 | RHD4CZ4L01SL1400, RHD4PRSHLDOSSL1300, RHD4PRSHLSTAGSL1300 |
|  | 8428 | **RHD4-02-002-L01-(SL)-Street Lighting Earthing System** |  |  |  |  |
|  | 8434 | **RHD4-02-002-Z4-L01-Telecommunications Network - TC** |  | 2027-03-07 | 2027-03-16 |  |
|  | 8435 | **RHD4-02-002-L01-(TC)-Telecommunications Ducts** |  | 2027-03-07 | 2027-03-16 |  |
| RHD4CZ4L01TC2100 |  | Excavation of HDPE Ducts for Telecom Network - (RD-L-1)-Z4-L01-TC | 2d | 2027-03-07 | 2027-03-08 | RHD4ENSDZ8APPTC190, RHD4CZ4L01SL2100, RHD4CZ4L01SL5100 |
| RHD4CZ4L01TC2200 |  | Installation of HDPE Ducts for Telecom Network - (RD-L-1)-Z4-L01-TC | 2d | 2027-03-13 | 2027-03-14 | RHD4CZ4L01TC2100, RHD4PRSHLDOSTC1000, RHD4PRSHLSTAGTC1000 |
| RHD4CZ4L01TC2400 |  | Backfilling of HDPE Ducts for Telecom Network - (RD-L-1)-Z4-L01-TC | 2d | 2027-03-15 | 2027-03-16 | RHD4CZ4L01TC2200 |
|  | 8436 | **RHD4-02-002-L01-(TC)-Telecommunications Manholes** |  |  |  |  |
|  | 8437 | **RHD4-02-002-L01-(TC)-Telecomminications Road Crossings** |  |  |  |  |
|  | 8438 | **RHD4-02-002-Z4-L01-Information and Communication Technologies - ICT** |  | 2027-03-13 | 2027-03-18 |  |
|  | 8439 | **RHD4-02-002-L01-(ICT)-Information and Communication Technologies Ducts** |  | 2027-03-13 | 2027-03-18 |  |
| RHD4CZ4L01ICT2100 |  | Excavation of HDPE Ducts for ICT Network - (RD-L-1)-Z4-L01-ICT | 2d | 2027-03-13 | 2027-03-14 | RHD4ENSDZ8APPICT200, RHD4CZ4L01TC2100 |
| RHD4CZ4L01ICT2200 |  | Installation of HDPE Ducts for ICT Network - (RD-L-1)-Z4-L01-ICT | 2d | 2027-03-15 | 2027-03-16 | RHD4CZ4L01ICT2100, RHD4PRSHLDOSICT1000, RHD4PRSHLSTAGICT1000 |
| RHD4CZ4L01ICT2400 |  | Backfilling of HDPE Ducts for ICT Network - (RD-L-1)-Z4-L01-ICT | 2d | 2027-03-17 | 2027-03-18 | RHD4CZ4L01ICT2200 |
|  | 8440 | **RHD4-02-002-L01-(ICT)-Information and Communication Technologies Manholes** |  |  |  |  |
|  | 8441 | **RHD4-02-002-L01-(ICT)-Information and Communication Technologies Road Crossings** |  |  |  |  |
|  | 8429 | **RHD4-02-002-Z4-L01-Landscape Network - LS** |  |  |  |  |
|  | 8430 | **RHD4-02-002-L01-(LS)-Landscape Lighting cables** |  |  |  |  |
|  | 8432 | **RHD4-02-002-L01-(LS)-Landscape Bollard Poles** |  |  |  |  |
|  | 8442 | **RHD4-02-002-Z4-L01-Security Network - CCTV** |  | 2027-03-20 | 2027-04-24 |  |
|  | 8443 | **RHD4-02-002-L01-(CCTV)-Civil Works** |  | 2027-03-20 | 2027-03-24 |  |
| RHD4CZ4L01CCTV2100 |  | Civil Works for Security Network - (RD-L-1)-Z4-L01-CCTV | 5d | 2027-03-20 | 2027-03-24 | RHD4CZ4L01ICT2400, RHD4CZ4L01TC2400 |
|  | 2959 | **RHD4-02-002-L01-(CCTV)-CCTV Poles** |  | 2027-03-25 | 2027-04-05 |  |
| RHD4CZ4L01CCTV1100 |  | Excavation for RC Base for CCTV Poles for Security Network - (RD-L-1)-Z4-L01-CCTV | 2d | 2027-03-25 | 2027-03-27 | RHD4CZ4L01CCTV2100 |
| RHD4CZ4L01CCTV1200 |  | Installation for RC Base for CCTV Poles for Security Network - (RD-L-1)-Z4-L01-CCTV | 2d | 2027-03-28 | 2027-03-29 | RHD4CZ4L01CCTV1100 |
| RHD4CZ4L01CCTV1300 |  | Backfill for RC Base for CCTV Poles for Security Network - (RD-L-1)-Z4-L01-CCTV | 2d | 2027-03-30 | 2027-03-31 | RHD4CZ4L01CCTV1200 |
| RHD4CZ4L01CCTV1400 |  | Installation for CCTV Poles for Security Network - (RD-L-1)-Z4-L01-CCTV | 2d | 2027-04-01 | 2027-04-03 | RHD4CZ4L01CCTV1300 |
| RHD4CZ4L01CCTV1500 |  | Protection post Installation for CCTV Poles for Security Network - (RD-L-1)-Z4-L01-CCTV | 2d | 2027-04-04 | 2027-04-05 | RHD4CZ4L01SL1500, RHD4CZ4L01CCTV1400 |
|  | 2960 | **RHD4-02-002-L01-(CCTV)-Camera** |  | 2027-04-06 | 2027-04-07 |  |
| RHD4CZ4L01CCTV3100 |  | Installation for Cameras for Security Network - (RD-L-1)-Z4-L01-CCTV | 2d | 2027-04-06 | 2027-04-07 | RHD4CZ4L01CCTV1400, RHD4CZ4L01CCTV4100 |
|  | 2961 | **RHD4-02-002-L01-(CCTV)-Power and Infrastructure** |  | 2027-04-04 | 2027-04-07 |  |
| RHD4CZ4L01CCTV4100 |  | Installation of Power outlet, UPS and midspan for PTZ Camerafor Cameras for Security Network - (RD-L-1)-Z4-L01-CCTV | 2d | 2027-04-04 | 2027-04-05 | RHD4CZ4L01CCTV1400 |
| RHD4CZ4L01CCTV4200 |  | Short Range Wireless PoP wireless Bridgefor CCTV Poles for Security Network - (RD-L-1)-Z4-L01-CCTV | 2d | 2027-04-06 | 2027-04-07 | RHD4CZ4L01CCTV4100 |
|  | 2963 | **RHD4-02-002-L01-(CCTV)-CCTV Panels and Components** |  | 2027-04-08 | 2027-04-24 |  |
| RHD4CZ4L01CCTV6100 |  | Installation for CCTV Panels for Security Network - (RD-L-1)-Z4-L01-CCTV | 14d | 2027-04-08 | 2027-04-24 | RHD4CZ4L01CCTV4200, RHD4CZ4L01CCTV3100, RHD4CZ4L01CCTV1500 |
|  | 2974 | **RHD4-02-002-Z4-A013** |  | 2026-08-11 | 2027-07-10 |  |
|  | 3005 | **RHD4-02-002-Z4-A013-Crossings Sewage Network - SWCr** |  |  |  |  |
|  | 3015 | **RHD4-02-002-A013-(SWCr)-MH Works - 1200 mm diameter** |  |  |  |  |
|  | 3009 | **RHD4-02-002-A013-(SWCr)-GRP Pipes - 600 mm diameter** |  |  |  |  |
|  | 3021 | **RHD4-02-002-A013-(SWCr)-Air Valve Chambers** |  |  |  |  |
|  | 3022 | **RHD4-02-002-A013-(SWCr)-Air Valves** |  |  |  |  |
|  | 3025 | **RHD4-02-002-A013-(SWCr)-Discharge Chambers** |  |  |  |  |
|  | 3049 | **RHD4-02-002-Z4-A013-Crossings Potable Network - PTCr** |  |  |  |  |
|  | 3053 | **RHD4-02-002-A013-(PTCr)-HDPE Pipes - 400 mm diameter** |  |  |  |  |
|  | 3056 | **RHD4-02-002-A013-(PTCr)-Butterfly Valve Chamber** |  |  |  |  |
|  | 3057 | **RHD4-02-002-A013-(PTCr)-Butterfly Valves** |  |  |  |  |
|  | 3060 | **RHD4-02-002-A013-(PTCr)-Air Valve Chambers** |  |  |  |  |
|  | 3061 | **RHD4-02-002-A013-(PTCr)-Air Valves** |  |  |  |  |
|  | 3062 | **RHD4-02-002-A013-(PTCr)-Fire Hydrant** |  |  |  |  |
|  | 3096 | **RHD4-02-002-Z4-A013-Crossings Irrigation Network - IRRC** |  |  |  |  |
|  | 3097 | **RHD4-02-002-A013-(IRRC)-HDPE Pipes - 160 mm diameter** |  |  |  |  |
|  | 3100 | **RHD4-02-002-A013-(IRRC)-HDPE Pipes - 250 mm diameter** |  |  |  |  |
|  | 3105 | **RHD4-02-002-A013-(IRRC)-Gate Valves (Direct Buried)** |  |  |  |  |
|  | 3110 | **RHD4-02-002-A013-(IRRC)-Air Valve Chamber** |  |  |  |  |
|  | 3111 | **RHD4-02-002-A013-(IRRC)-Air Valves** |  |  |  |  |
|  | 3153 | **RHD4-02-002-Z4-A013-Road Works - RD** |  | 2026-08-18 | 2027-07-10 |  |
|  | 3154 | **RHD4-02-002-A013-(RD)-Subgrade** |  | 2026-08-18 | 2026-08-23 |  |
| RHD4CZ4A013RD1100 |  | Supply, lay and compaction subgrade compacted thickness 300 mm for Roads - (RD-A-1 /3)-Z4-A013-RD | 5d | 2026-08-18 | 2026-08-23 | RHD4ENSDZ4APPRD220, RHD4ENSDZ4APPEW100 SS, RHD4CZ4A013ST3300 |
|  | 3155 | **RHD4-02-002-A013-(RD)-Aggregate Base Course** |  | 2026-08-24 | 2026-08-29 |  |
| RHD4CZ4A013RD2100 |  | Supply, lay and compaction Aggregate base course compacted thickness 300 mmfor Roads - (RD-A-1 /3)-Z4-A013-RD | 5d | 2026-08-24 | 2026-08-29 | RHD4PRSHLDOSRD1000, RHD4PRSHLSTAGRD1000, RHD4CZ4A013RD1100 |

| ID | WBS | Task | Duration | Start | Finish | Predecessors |
| --- | --- | --- | --- | --- | --- | --- |
|  | 3156 | **RHD4-02-002-A013-(RD)-Bituminous base course Two Layers, including (MC1)&(RC2)** |  | 2026-08-30 | 2027-04-14 |  |
| RHD4CZ4A013RD3100 |  | Supply, lay and Asphaltic base course including Prime Coat (MC1) for 1st Layer - (RD-A-1 /3)-Z4-A013-RD | 5d | 2026-08-30 | 2026-09-03 | RHD4CZ4A013RD2100, RHD4PRSHLDOSRD1100, RHD4ENMSASPH2000, RHD4ENMSASPH2010, RHD4PRSHLSTAGRD1100 |
| RHD4CZ4A013RD3200 |  | Supply, lay and Asphaltic base course including Tack Coat (RC2) for 2nd Layer - (RD-A-1 /3)-Z4-A013-RD | 10d | 2027-04-04 | 2027-04-14 | RHD4CZ4A013RD3100, RHD4PRSHLDOSRD1100, RHD4PRSHLSTAGRD1100, RHD4CZ4A013ICT2400 |
|  | 3158 | **RHD4-02-002-A013-(RD)-Precast Concrete Curb** |  | 2027-04-15 | 2027-04-24 |  |
| RHD4CZ4A013RD5100 |  | Supply and installation Precast Concrete Kerb for Roads - (RD-A-1 /3)-Z4-A013-RD | 8d | 2027-04-15 | 2027-04-24 | RHD4CZ4A013RD3200, RHD4PRSHLDOSRD1200, RHD4ENMSRD2000, RHD4ENMSRD2010, RHD4PRSHLSTAGRD1200 |
|  | 3161 | **RHD4-02-002-A013-(RD)-Traffic Signage** |  | 2027-04-25 | 2027-05-04 |  |
| RHD4CZ4A013RD8100 |  | Installation of Traffic Signage for Road Network - (RD-A-1 /3)-Z4-A013-RD | 9d | 2027-04-25 | 2027-05-04 | RHD4CZ4A013RD5100, RHD4PRSHLDOSRD1600, RHD4PRSHLSTAGRD1600, RHD4CZ4L01RD8100 |
|  | 3159 | **RHD4-02-002-A013-(RD)-Precast Interlocking Block Pavers** |  |  |  |  |
|  | 3157 | **RHD4-02-002-A013-(RD)-Bituminous concrete wearing course including tack coat (RC2)** |  | 2027-04-25 | 2027-04-28 |  |
| RHD4CZ4A013RD4100 |  | Supply, lay and compaction Asphaltic wearing course including tack Coat (RC2)for Road Network - (RD-A-1 /3)-Z4-A013-RD | 4d | 2027-04-25 | 2027-04-28 | RHD4CZ4A013RD5100 |
|  | 3162 | **RHD4-02-002-A013-(RD)-Speed Table and Wheel Stopper** |  |  |  |  |
|  | 3160 | **RHD4-02-002-A013-(RD)-Pavement Marking** |  | 2027-07-07 | 2027-07-10 |  |
| RHD4CZ4A013RD7100 |  | Pavement Markings for Road Network - (RD-A-1 /3)-Z4-A013-RD | 3d | 2027-07-07 | 2027-07-10 | RHD4CZ4A013RD4100, RHD4PRSHLDOSRD1500, RHD4PRSHLSTAGRD1500, RHD4CZ6C062RD7100 |
|  | 2978 | **RHD4-02-002-Z4-A013-Storm Network - ST** |  | 2026-08-11 | 2026-12-28 |  |
|  | 2428 | **RHD4-02-002-A013-(ST)-MH Works - 1200 mm diameter** |  | 2026-08-11 | 2026-08-22 |  |
| RHD4CZ4A013ST3100 |  | Excavation and PC Blinding works for MH 1200 mm - (RD-A-1 /3)-Z4-A013-ST | 2d | 2026-08-11 | 2026-08-12 | RHD4CZ5L016ST1508 |
| RHD4CZ4A013ST3200 |  | Installation of Base for MH 1200 mm - (RD-A-1 /3)-Z4-A013-ST | 2d | 2026-08-13 | 2026-08-15 | RHD4CZ4A013ST3100 |
| RHD4CZ4A013ST3300 |  | MH Ring and C.Slab works and Backfilling works for MH 1200 mm - (RD-A-1 /3)-Z4-A013-ST | 2d | 2026-08-16 | 2026-08-17 | RHD4CZ4A013ST3200 |
| RHD4CZ4A013ST3400 |  | Steel Cover for MH 1200 mm - (RD-A-1 /3)-Z4-A013-ST | 2d | 2026-08-18 | 2026-08-19 | RHD4CZ4A013ST3300 |
| RHD4CZ4A013ST3500 |  | Finishing, Benching, Testing works for MH 1200 mm - (RD-A-1 /3)-Z4-A013-ST | 2d | 2026-08-20 | 2026-08-22 | RHD4CZ4A013ST3400 |
|  | 2416 | **RHD4-02-002-A013-(ST)-GRP Pipes - 800 mm diameter** |  | 2026-08-13 | 2026-08-27 |  |
| RHD4CZ4A013ST1104 |  | Excavation works for GRP Pipe Line 800 mm - (RD-A-1 /3)-Z4-A013-ST | 3d | 2026-08-13 | 2026-08-16 | RHD4CZ4A013ST3100 |
| RHD4CZ4A013ST1204 |  | Bedding works for GRP Pipe Line 800 mm - (RD-A-1 /3)-Z4-A013-ST | 3d | 2026-08-17 | 2026-08-19 | RHD4CZ4A013ST1104 |
| RHD4CZ4A013ST1304 |  | Installing for GRP Pipe Line 800 mm - (RD-A-1 /3)-Z4-A013-ST | 2d | 2026-08-20 | 2026-08-22 | RHD4CZ4A013ST1204 |
| RHD4CZ4A013ST1404 |  | Primary Test for GRP Pipe Line 800 mm - (RD-A-1 /3)-Z4-A013-ST | 2d | 2026-08-23 | 2026-08-24 | RHD4CZ4A013ST3300, RHD4CZ4A013ST1304 |
| RHD4CZ4A013ST1504 |  | Backfilling and warning tape works for GRP Pipe Line 800 mm - (RD-A-1 /3)-Z4-A013-ST | 3d | 2026-08-25 | 2026-08-27 | RHD4CZ4A013ST1404 |
|  | 2414 | **RHD4-02-002-A013-(ST)-GRP Pipes - 600 mm diameter** |  | 2026-08-17 | 2026-08-27 |  |
| RHD4CZ4A013ST1102 |  | Excavation works for GRP Pipe Line 600 mm - (RD-A-1 /3)-Z4-A013-ST | 2d | 2026-08-17 | 2026-08-18 | RHD4CZ4A013ST1104 |
| RHD4CZ4A013ST1202 |  | Bedding works for GRP Pipe Line 600 mm - (RD-A-1 /3)-Z4-A013-ST | 2d | 2026-08-19 | 2026-08-20 | RHD4CZ4A013ST1102 |
| RHD4CZ4A013ST1302 |  | Installing for GRP Pipe Line 600 mm - (RD-A-1 /3)-Z4-A013-ST | 2d | 2026-08-22 | 2026-08-23 | RHD4CZ4A013ST1202 |
| RHD4CZ4A013ST1402 |  | Primary Test for GRP Pipe Line 600 mm - (RD-A-1 /3)-Z4-A013-ST | 2d | 2026-08-24 | 2026-08-25 | RHD4CZ4A013ST1302 |
| RHD4CZ4A013ST1502 |  | Backfilling and warning tape works for GRP Pipe Line 600 mm - (RD-A-1 /3)-Z4-A013-ST | 2d | 2026-08-26 | 2026-08-27 | RHD4CZ4A013ST1402 |
|  | 2412 | **RHD4-02-002-A013-(ST)-GRP Pipes - 400 mm diameter** |  | 2026-08-19 | 2026-08-30 |  |
| RHD4CZ4A013ST1100 |  | Excavation works for GRP Pipe Line 400 mm - (RD-A-1 /3)-Z4-A013-ST | 2d | 2026-08-19 | 2026-08-20 | RHD4CZ4A013ST1102 |
| RHD4CZ4A013ST1200 |  | Bedding works for GRP Pipe Line 400 mm - (RD-A-1 /3)-Z4-A013-ST | 2d | 2026-08-22 | 2026-08-23 | RHD4CZ4A013ST1100 |
| RHD4CZ4A013ST1300 |  | Installing for GRP Pipe Line 400 mm - (RD-A-1 /3)-Z4-A013-ST | 2d | 2026-08-24 | 2026-08-25 | RHD4CZ4A013ST1200 |
| RHD4CZ4A013ST1400 |  | Primary Test for GRP Pipe Line 400 mm - (RD-A-1 /3)-Z4-A013-ST | 2d | 2026-08-26 | 2026-08-27 | RHD4CZ4A013ST1300 |
| RHD4CZ4A013ST1500 |  | Backfilling and warning tape works for GRP Pipe Line 400 mm - (RD-A-1 /3)-Z4-A013-ST | 2d | 2026-08-29 | 2026-08-30 | RHD4CZ4A013ST1504, RHD4CZ4A013ST1502, RHD4CZ4A013ST1400 |
|  | 2413 | **RHD4-02-002-A013-(ST)-GRP Pipes - 500 mm diameter** |  | 2026-08-22 | 2026-09-01 |  |
| RHD4CZ4A013ST1101 |  | Excavation works for GRP Pipe Line 500 mm - (RD-A-1 /3)-Z4-A013-ST | 2d | 2026-08-22 | 2026-08-23 | RHD4CZ4A013ST1100 |
| RHD4CZ4A013ST1201 |  | Bedding works for GRP Pipe Line 500 mm - (RD-A-1 /3)-Z4-A013-ST | 2d | 2026-08-24 | 2026-08-25 | RHD4CZ4A013ST1101 |
| RHD4CZ4A013ST1301 |  | Installing for GRP Pipe Line 500 mm - (RD-A-1 /3)-Z4-A013-ST | 2d | 2026-08-26 | 2026-08-27 | RHD4CZ4A013ST1201 |
| RHD4CZ4A013ST1401 |  | Primary Test for GRP Pipe Line 500 mm - (RD-A-1 /3)-Z4-A013-ST | 2d | 2026-08-29 | 2026-08-30 | RHD4CZ4A013ST1301 |
| RHD4CZ4A013ST1501 |  | Backfilling and warning tape works for GRP Pipe Line 500 mm - (RD-A-1 /3)-Z4-A013-ST | 2d | 2026-08-31 | 2026-09-01 | RHD4CZ4A013ST1500, RHD4CZ4A013ST1401 |
|  | 2997 | **RHD4-02-002-A013-(ST)-MH Works - 2000 mm diameter** |  | 2026-08-24 | 2026-09-26 |  |
| RHD4CZ4A013ST3102 |  | Excavation and PC Blinding works for MH 2000 mm - (RD-A-1 /3)-Z4-A013-ST | 6d | 2026-08-24 | 2026-08-30 | RHD4ENSDZ4APPST110, RHD4ENMSST2000, RHD4CZ4A013ST1101 |
| RHD4CZ4A013ST3202 |  | Installation of Base for MH 2000 mm - (RD-A-1 /3)-Z4-A013-ST | 3d | 2026-08-31 | 2026-09-02 | RHD4CZ4A013ST3102, RHD4PRSHLSTAGST1603 |
| RHD4CZ4A013ST3302 |  | MH Ring and C.Slab works and Backfilling works for MH 2000 mm - (RD-A-1 /3)-Z4-A013-ST | 8d | 2026-09-03 | 2026-09-12 | RHD4CZ4A013ST3202, RHD4PRSHLDOSST1603, RHD4CZ4A013ST1501 |
| RHD4CZ4A013ST3402 |  | Steel Cover for MH 2000 mm - (RD-A-1 /3)-Z4-A013-ST | 5d | 2026-09-13 | 2026-09-17 | RHD4CZ4A013ST3302, RHD4PRSHLDOSST1703, RHD4PRSHLSTAGST1703 |
| RHD4CZ4A013ST3502 |  | Finishing, Benching, Testing works for MH 2000 mm - (RD-A-1 /3)-Z4-A013-ST | 6d | 2026-09-19 | 2026-09-26 | RHD4CZ4A013ST3402, RHD4CZ4A013RD3100 |
|  | 2996 | **RHD4-02-002-A013-(ST)-MH Works - 1500 mm diameter** |  | 2026-09-27 | 2026-10-24 |  |
| RHD4CZ4A013ST3101 |  | Excavation and PC Blinding works for MH 1500 mm - (RD-A-1 /3)-Z4-A013-ST | 3d | 2026-09-27 | 2026-09-29 | RHD4CZ4A013ST3102, RHD4ENSDZ4APPST110, RHD4ENMSST2000, RHD4CZ4A013ST3502 |
| RHD4CZ4A013ST3201 |  | Installation of Base for MH 1500 mm - (RD-A-1 /3)-Z4-A013-ST | 6d | 2026-09-30 | 2026-10-06 | RHD4CZ4A013ST3101, RHD4CZ4A013ST3202, RHD4PRSHLSTAGST1603 |
| RHD4CZ4A013ST3301 |  | MH Ring and C.Slab works and Backfilling works for MH 1500 mm - (RD-A-1 /3)-Z4-A013-ST | 6d | 2026-10-07 | 2026-10-13 | RHD4CZ4A013ST3201, RHD4CZ4A013ST3302, RHD4PRSHLDOSST1603 |
| RHD4CZ4A013ST3401 |  | Steel Cover for MH 1500 mm - (RD-A-1 /3)-Z4-A013-ST | 3d | 2026-10-14 | 2026-10-17 | RHD4CZ4A013ST3301, RHD4PRSHLDOSST1703, RHD4PRSHLSTAGST1703 |
| RHD4CZ4A013ST3501 |  | Finishing, Benching, Testing works for MH 1500 mm - (RD-A-1 /3)-Z4-A013-ST | 6d | 2026-10-18 | 2026-10-24 | RHD4CZ4A013ST3401, RHD4CZ4A013ST3502 |
|  | 2990 | **RHD4-02-002-A013-(ST)-GRP Pipes - 1500 mm diameter** |  |  |  |  |
|  | 2987 | **RHD4-02-002-A013-(ST)-GRP Pipes - 1200 mm diameter** |  | 2026-10-14 | 2026-11-03 |  |
| RHD4CZ4A013ST1108 |  | Excavation works for GRP Pipe Line 1200 mm - (RD-A-1 /3)-Z4-A013-ST | 4d | 2026-10-14 | 2026-10-18 | RHD4ENSDZ4APPST110, RHD4PRSHLSTAGST1003, RHD4CZ4A013ST3301 |
| RHD4CZ4A013ST1208 |  | Bedding works for GRP Pipe Line 1200 mm - (RD-A-1 /3)-Z4-A013-ST | 4d | 2026-10-19 | 2026-10-22 | RHD4CZ4A013ST1108 |
| RHD4CZ4A013ST1308 |  | Installing for GRP Pipe Line 1200 mm - (RD-A-1 /3)-Z4-A013-ST | 3d | 2026-10-24 | 2026-10-26 | RHD4CZ4A013ST1208, RHD4PRSHLSTAGST1003, RHD4PRSHLDOSST1603, RHD4PRSHLPOST1000, RHD4PRSHLDOSST1003 |
| RHD4CZ4A013ST1408 |  | Primary Test for GRP Pipe Line 1200 mm - (RD-A-1 /3)-Z4-A013-ST | 3d | 2026-10-27 | 2026-10-29 | RHD4CZ4A013ST1308 |
| RHD4CZ4A013ST1508 |  | Backfilling and warning tape works for GRP Pipe Line 1200 mm - (RD-A-1 /3)-Z4-A013-ST | 4d | 2026-10-31 | 2026-11-03 | RHD4CZ4A013ST1408 |
|  | 2986 | **RHD4-02-002-A013-(ST)-GRP Pipes - 1100 mm diameter** |  | 2026-11-04 | 2026-11-18 |  |
| RHD4CZ4A013ST1107 |  | Excavation works for GRP Pipe Line 1100 mm - (RD-A-1 /3)-Z4-A013-ST | 3d | 2026-11-04 | 2026-11-07 | RHD4ENSDZ4APPST110, RHD4CZ4A013ST1508 |
| RHD4CZ4A013ST1207 |  | Bedding works for GRP Pipe Line 1100 mm - (RD-A-1 /3)-Z4-A013-ST | 3d | 2026-11-08 | 2026-11-10 | RHD4CZ4A013ST1107 |
| RHD4CZ4A013ST1307 |  | Installing for GRP Pipe Line 1100 mm - (RD-A-1 /3)-Z4-A013-ST | 2d | 2026-11-11 | 2026-11-12 | RHD4CZ4A013ST1207, RHD4CZ4A013ST1308, RHD4PRSHLSTAGST1003, RHD4PRSHLDOSST1603, RHD4PRSHLPOST1000, RHD4PRSHLDOSST1003 |
| RHD4CZ4A013ST1407 |  | Primary Test for GRP Pipe Line 1100 mm - (RD-A-1 /3)-Z4-A013-ST | 2d | 2026-11-14 | 2026-11-15 | RHD4CZ4A013ST1307, RHD4CZ4A013ST1408 |
| RHD4CZ4A013ST1507 |  | Backfilling and warning tape works for GRP Pipe Line 1100 mm - (RD-A-1 /3)-Z4-A013-ST | 3d | 2026-11-16 | 2026-11-18 | RHD4CZ4A013ST1407, RHD4CZ4A013ST1508 |
|  | 2985 | **RHD4-02-002-A013-(ST)-GRP Pipes - 1000 mm diameter** |  | 2026-11-08 | 2026-11-22 |  |

| ID | WBS | Task | Duration | Start | Finish | Predecessors |
| --- | --- | --- | --- | --- | --- | --- |
| RHD4CZ4A013ST1106 |  | Excavation works for GRP Pipe Line 1000 mm - (RD-A-1 /3)-Z4-A013-ST | 3d | 2026-11-08 | 2026-11-10 | RHD4ENSDZ4APPST110, RHD4CZ4A013ST1107 |
| RHD4CZ4A013ST1206 |  | Bedding works for GRP Pipe Line 1000 mm - (RD-A-1 /3)-Z4-A013-ST | 3d | 2026-11-11 | 2026-11-14 | RHD4CZ4A013ST1106 |
| RHD4CZ4A013ST1306 |  | Installing for GRP Pipe Line 1000 mm - (RD-A-1 /3)-Z4-A013-ST | 2d | 2026-11-15 | 2026-11-16 | RHD4CZ4A013ST1206, RHD4CZ4A013ST1307, RHD4PRSHLSTAGST1003, RHD4PRSHLDOSST1603, RHD4PRSHLPOST1000, RHD4PRSHLDOSST1003 |
| RHD4CZ4A013ST1406 |  | Primary Test for GRP Pipe Line 1000 mm - (RD-A-1 /3)-Z4-A013-ST | 2d | 2026-11-17 | 2026-11-18 | RHD4CZ4A013ST1306, RHD4CZ4A013ST1407 |
| RHD4CZ4A013ST1506 |  | Backfilling and warning tape works for GRP Pipe Line 1000 mm - (RD-A-1 /3)-Z4-A013-ST | 3d | 2026-11-19 | 2026-11-22 | RHD4CZ4A013ST1406, RHD4CZ4A013ST1507 |
|  | 2984 | **RHD4-02-002-A013-(ST)-GRP Pipes - 900 mm diameter** |  | 2026-11-11 | 2026-11-24 |  |
| RHD4CZ4A013ST1105 |  | Excavation works for GRP Pipe Line 900 mm - (RD-A-1 /3)-Z4-A013-ST | 2d | 2026-11-11 | 2026-11-12 | RHD4CZ4A013ST1106, RHD4ENSDZ4APPST110 |
| RHD4CZ4A013ST1205 |  | Bedding works for GRP Pipe Line 900 mm - (RD-A-1 /3)-Z4-A013-ST | 2d | 2026-11-14 | 2026-11-15 | RHD4CZ4A013ST1105 |
| RHD4CZ4A013ST1305 |  | Installing for GRP Pipe Line 900 mm - (RD-A-1 /3)-Z4-A013-ST | 2d | 2026-11-17 | 2026-11-18 | RHD4CZ4A013ST1205, RHD4CZ4A013ST1306, RHD4PRSHLSTAGST1003, RHD4PRSHLDOSST1603, RHD4PRSHLPOST1000, RHD4PRSHLDOSST1003 |
| RHD4CZ4A013ST1405 |  | Primary Test for GRP Pipe Line 900 mm - (RD-A-1 /3)-Z4-A013-ST | 2d | 2026-11-19 | 2026-11-21 | RHD4CZ4A013ST1305, RHD4CZ4A013ST1406 |
| RHD4CZ4A013ST1505 |  | Backfilling and warning tape works for GRP Pipe Line 900 mm - (RD-A-1 /3)-Z4-A013-ST | 2d | 2026-11-23 | 2026-11-24 | RHD4CZ4A013ST1405, RHD4CZ4A013ST1506 |
|  | 2982 | **RHD4-02-002-A013-(ST)-GRP Pipes - 700 mm diameter** |  | 2026-11-14 | 2026-11-26 |  |
| RHD4CZ4A013ST1103 |  | Excavation works for GRP Pipe Line 700 mm - (RD-A-1 /3)-Z4-A013-ST | 2d | 2026-11-14 | 2026-11-15 | RHD4CZ4A013ST1105, RHD4ENSDZ4APPST110 |
| RHD4CZ4A013ST1203 |  | Bedding works for GRP Pipe Line 700 mm - (RD-A-1 /3)-Z4-A013-ST | 2d | 2026-11-16 | 2026-11-17 | RHD4CZ4A013ST1103 |
| RHD4CZ4A013ST1303 |  | Installing for GRP Pipe Line 700 mm - (RD-A-1 /3)-Z4-A013-ST | 2d | 2026-11-19 | 2026-11-21 | RHD4CZ4A013ST1203, RHD4CZ4A013ST1305, RHD4PRSHLSTAGST1003, RHD4PRSHLDOSST1603, RHD4PRSHLPOST1000, RHD4PRSHLDOSST1003 |
| RHD4CZ4A013ST1403 |  | Primary Test for GRP Pipe Line 700 mm - (RD-A-1 /3)-Z4-A013-ST | 2d | 2026-11-22 | 2026-11-23 | RHD4CZ4A013ST1303, RHD4CZ4A013ST1405 |
| RHD4CZ4A013ST1503 |  | Backfilling and warning tape works for GRP Pipe Line 700 mm - (RD-A-1 /3)-Z4-A013-ST | 2d | 2026-11-25 | 2026-11-26 | RHD4CZ4A013ST1403, RHD4CZ4A013ST1505, RHD4CZ4A013ST3500 |
|  | 2994 | **RHD4-02-002-A013-(ST)-UPVC Pipes - 400 mm diameter** |  |  |  |  |
|  | 2993 | **RHD4-02-002-A013-(ST)-UPVC Pipes - 300 mm diameter** |  | 2026-11-16 | 2026-12-28 |  |
| RHD4CZ4A013ST2100 |  | Excavation works for UPVC Pipe Line 300 mm - (RD-A-1 /3)-Z4-A013-ST | 8d | 2026-11-16 | 2026-11-24 | RHD4ENSDZ4APPST110, RHD4CZ4A013ST1103 |
| RHD4CZ4A013ST2200 |  | Bedding works for UPVC Pipe Line 300 mm - (RD-A-1 /3)-Z4-A013-ST | 7d | 2026-11-25 | 2026-12-02 | RHD4CZ4A013ST2100 |
| RHD4CZ4A013ST2300 |  | Installing for UPVC Pipe Line 300 mm - (RD-A-1 /3)-Z4-A013-ST | 8d | 2026-12-03 | 2026-12-12 | RHD4CZ4A013ST2200, RHD4PRSHLDOSST1103, RHD4PRSHLSTAGST1103 |
| RHD4CZ4A013ST2400 |  | Primary Test for UPVC Pipe Line 300 mm - (RD-A-1 /3)-Z4-A013-ST | 5d | 2026-12-13 | 2026-12-17 | RHD4CZ4A013ST2300, RHD4CZ4A013ST6100 |
| RHD4CZ4A013ST2500 |  | Backfilling and warning tape works for UPVC Pipe Line 300 mm - (RD-A-1 /3)-Z4-A013-ST | 9d | 2026-12-19 | 2026-12-28 | RHD4CZ4A013ST2400 |
|  | 3001 | **RHD4-02-002-A013-(ST)-Concrete Encasement** |  | 2026-12-10 | 2026-12-12 |  |
| RHD4CZ4A013ST6100 |  | Pipe Encasement for Storm Pipelines - (RD-A-1 /3)-Z4-A013-ST | 2d | 2026-12-10 | 2026-12-12 | RHD4CZ4A013ST2300 FF, RHD4CZ4A013ST2200 |
|  | 3002 | **RHD4-02-002-Z4-A013-Catch Basin - ST** |  | 2026-08-31 | 2026-10-25 |  |
|  | 3003 | **RHD4-02-002-A013-(ST)-Single Catch Basin Works** |  | 2026-08-31 | 2026-10-21 |  |
| RHD4CZ4A013ST7100 |  | Excavation works for Single Catch Basin - (RD-A-1 /3)-Z4-A013-ST | 7d | 2026-08-31 | 2026-09-07 | RHD4ENSDZ4APPST110, RHD4CZ4A013ST3102 |
| RHD4CZ4A013ST7200 |  | PC Blinding, Installation and Pipe connection for Single Catch Basin - (RD-A-1 /3)-Z4-A013-ST | 7d | 2026-09-08 | 2026-09-15 | RHD4CZ4A013ST7100 |
| RHD4CZ4A013ST7300 |  | Rings & C.Slab & Final Backfill for Single Catch Basin - (RD-A-1 /3)-Z4-A013-ST | 9d | 2026-09-16 | 2026-09-27 | RHD4CZ4A013ST7200, RHD4PRSHLDOSST1303, RHD4PRSHLSTAGST1303 |
| RHD4CZ4A013ST7400 |  | Steel Cover for Single Catch Basin - (RD-A-1 /3)-Z4-A013-ST | 7d | 2026-09-28 | 2026-10-05 | RHD4CZ4A013ST7300, RHD4PRSHLDOSST1703 |
| RHD4CZ4A013ST7500 |  | Finishing and Insulation works for Single Catch Basin - (RD-A-1 /3)-Z4-A013-ST | 14d | 2026-10-06 | 2026-10-21 | RHD4CZ4A013ST7400 |
|  | 3004 | **RHD4-02-002-A013-(ST)-Double Catch Basin Works** |  | 2026-10-14 | 2026-10-25 |  |
| RHD4CZ4A013ST8100 |  | Excavation works for Double Catch Basin - (RD-A-1 /3)-Z4-A013-ST | 2d | 2026-10-14 | 2026-10-15 | RHD4CZ4A013ST7100 SS, RHD4CZ4A013ST3301, RHD4ENSDZ4APPST110 |
| RHD4CZ4A013ST8200 |  | PC Blinding, Installation and Pipe connection for Double Catch Basin - (RD-A-1 /3)-Z4-A013-ST | 2d | 2026-10-17 | 2026-10-18 | RHD4CZ4A013ST8100, RHD4CZ4A013ST7200 SS |
| RHD4CZ4A013ST8300 |  | Rings & C.Slab & Final Backfillfor Double Catch Basin - (RD-A-1 /3)-Z4-A013-ST | 2d | 2026-10-19 | 2026-10-20 | RHD4CZ4A013ST8200, RHD4CZ4A013ST7300 SS, RHD4PRSHLDOSST1303, RHD4PRSHLSTAGST1303 |
| RHD4CZ4A013ST8400 |  | Steel Cover for Double Catch Basin - (RD-A-1 /3)-Z4-A013-ST | 2d | 2026-10-21 | 2026-10-22 | RHD4CZ4A013ST8300, RHD4CZ4A013ST7400 SS, RHD4PRSHLDOSST1703 |
| RHD4CZ4A013ST8500 |  | Finishing and Insulation works for Double Catch Basin - (RD-A-1 /3)-Z4-A013-ST | 2d | 2026-10-24 | 2026-10-25 | RHD4CZ4A013ST8400, RHD4CZ4A013ST7500 SS |
|  | 3027 | **RHD4-02-002-Z4-A013-Sewage Network - SW** |  |  |  |  |
|  | 3031 | **RHD4-02-002-A013-(SW)-GRP Pipes - 600 mm diameter** |  |  |  |  |
|  | 3036 | **RHD4-02-002-A013-(SW)-Concrete Encasement** |  |  |  |  |
|  | 3064 | **RHD4-02-002-Z4-A013-Potable Network - PT** |  | 2026-11-16 | 2027-01-06 |  |
|  | 3068 | **RHD4-02-002-A013-(PT)-HDPE Pipes - 400 mm diameter** |  | 2026-11-16 | 2026-12-26 |  |
| RHD4CZ4A013PT1103 |  | Excavation works for HDPE Pipline 400 mm - (RD-A-1 /3)-Z4-A013-PT | 7d | 2026-11-16 | 2026-11-23 | RHD4ENSDZ4APPPT130, RHD4ENMSPT2000, RHD4CZ4A013ST1103 |
| RHD4CZ4A013PT1203 |  | Bedding works for HDPE Pipline 400 mm - (RD-A-1 /3)-Z4-A013-PT | 7d | 2026-11-24 | 2026-12-01 | RHD4CZ4A013PT1103 |
| RHD4CZ4A013PT1303 |  | Installing for HDPE Pipline 400 mm - (RD-A-1 /3)-Z4-A013-PT | 9d | 2026-12-02 | 2026-12-12 | RHD4CZ4A013PT1203, RHD4PRSHLDOSPT1000, RHD4PRSHLSTAGPT1000 |
| RHD4CZ4A013PT1403 |  | Primary Test for HDPE Pipline 400 mm - (RD-A-1 /3)-Z4-A013-PT | 6d | 2026-12-13 | 2026-12-19 | RHD4CZ4A013PT1303 |
| RHD4CZ4A013PT1503 |  | Backfilling and warning tape works for HDPE Pipline 400 mm - (RD-A-1 /3)-Z4-A013-PT | 6d | 2026-12-20 | 2026-12-26 | RHD4CZ4A013PT1403 |
|  | 3071 | **RHD4-02-002-A013-(PT)-Butterfly Valve Chamber** |  | 2026-11-24 | 2026-12-28 |  |
| RHD4CZ4A013PT2100 |  | Excavation and Bedding for Butterfly Valve Chamber for Potable Water Network - (RD-A-1 /3)-Z4-A013-PT | 2d | 2026-11-24 | 2026-11-25 | RHD4ENSDZ4APPPT130, RHD4CZ4A013PT1103 |
| RHD4CZ4A013PT2200 |  | PC works for Butterfly Valve Chamber for Potable Water Network - (RD-A-1 /3)-Z4-A013-PT | 2d | 2026-11-26 | 2026-11-28 | RHD4CZ4A013PT2100 |
| RHD4CZ4A013PT2300 |  | Installation for Butterfly Valve Chamber for Potable Water Network - (RD-A-1 /3)-Z4-A013-PT | 2d | 2026-11-29 | 2026-11-30 | RHD4CZ4A013PT2200, RHD4PRSHLDOSPT1100, RHD4PRSHLDOSPT1400, RHD4PRSHLSTAGPT1100, RHD4PRSHLSTAGPT1400 |
| RHD4CZ4A013PT2400 |  | Backfilling works for Butterfly Valve Chamber for Potable Water Network - (RD-A-1 /3)-Z4-A013-PT | 2d | 2026-12-27 | 2026-12-28 | RHD4CZ4A013PT2300, RHD4CZ4A013PT1503 |
|  | 3072 | **RHD4-02-002-A013-(PT)-Butterfly Valves** |  | 2026-12-01 | 2026-12-30 |  |
| RHD4CZ4A013PT3101 |  | Installation for Butterfly Valves for Potable Water Network - (RD-A-1 /3)-Z4-A013-PT | 2d | 2026-12-01 | 2026-12-02 | RHD4CZ4A013PT2300, RHD4PRSHLDOSPT1200, RHD4PRSHLSTAGPT1200 |
| RHD4CZ4A013PT3201 |  | Stem and Service box for Butterfly Valves for Potable Water Network - (RD-A-1 /3)-Z4-A013-PT | 2d | 2026-12-29 | 2026-12-30 | RHD4CZ4A013PT3101, RHD4CZ4A013PT2400, RHD4PRSHLDOSPT1300, RHD4PRSHLSTAGPT1300 |
|  | 3073 | **RHD4-02-002-A013-(PT)-Wash out Valve Chambers** |  | 2026-11-24 | 2026-12-02 |  |
| RHD4CZ4A013PT2101 |  | Excavation and Bedding for Wash out Valve Chambers for Potable Water Network - (RD-A-1 /3)-Z4-A013-PT | 2d | 2026-11-24 | 2026-11-25 | RHD4ENSDZ4APPPT130, RHD4CZ4A013PT1103 |
| RHD4CZ4A013PT2201 |  | PC works for Wash out Valve Chambers for Potable Water Network - (RD-A-1 /3)-Z4-A013-PT | 2d | 2026-11-26 | 2026-11-28 | RHD4CZ4A013PT2101 |
| RHD4CZ4A013PT2301 |  | Installation for Wash out Valve Chambers for Potable Water Network - (RD-A-1 /3)-Z4-A013-PT | 2d | 2026-11-29 | 2026-11-30 | RHD4CZ4A013PT2201, RHD4PRSHLDOSPT1100, RHD4PRSHLDOSPT1400, RHD4PRSHLSTAGPT1100, RHD4PRSHLSTAGPT1400 |
| RHD4CZ4A013PT2401 |  | Backfilling works for Wash out Valve Chambers for Potable Water Network - (RD-A-1 /3)-Z4-A013-PT | 2d | 2026-12-01 | 2026-12-02 | RHD4CZ4A013PT2301 |
|  | 3074 | **RHD4-02-002-A013-(PT)-Wash out Valves** |  | 2026-12-01 | 2026-12-05 |  |
| RHD4CZ4A013PT3102 |  | Installation for Wash out Valves for Potable Water Network - (RD-A-1 /3)-Z4-A013-PT | 2d | 2026-12-01 | 2026-12-02 | RHD4CZ4A013PT2301, RHD4PRSHLDOSPT1200, RHD4PRSHLSTAGPT1200 |
| RHD4CZ4A013PT3202 |  | Stem and Service box for Wash out Valves for Potable Water Network - (RD-A-1 /3)-Z4-A013-PT | 2d | 2026-12-03 | 2026-12-05 | RHD4CZ4A013PT3102, RHD4CZ4A013PT2401, RHD4PRSHLDOSPT1300, RHD4PRSHLSTAGPT1300 |
|  | 3075 | **RHD4-02-002-A013-(PT)-Air Valve Chambers** |  | 2026-11-24 | 2026-12-02 |  |
| RHD4CZ4A013PT2102 |  | Excavation and Bedding for Air Valve Chambers for Potable Water Network - (RD-A-1 /3)-Z4-A013-PT | 2d | 2026-11-24 | 2026-11-25 | RHD4ENSDZ4APPPT130, RHD4CZ4A013PT1103 |
| RHD4CZ4A013PT2202 |  | PC works for Air Valve Chambers for Potable Water Network - (RD-A-1 /3)-Z4-A013-PT | 2d | 2026-11-26 | 2026-11-28 | RHD4CZ4A013PT2102 |
| RHD4CZ4A013PT2302 |  | Installation for Air Valve Chambers for Potable Water Network - (RD-A-1 /3)-Z4-A013-PT | 2d | 2026-11-29 | 2026-11-30 | RHD4CZ4A013PT2202, RHD4PRSHLDOSPT1100, RHD4PRSHLDOSPT1400, RHD4PRSHLSTAGPT1100, RHD4PRSHLSTAGPT1400 |
| RHD4CZ4A013PT2402 |  | Backfilling works for Air Valve Chambers for Potable Water Network - (RD-A-1 /3)-Z4-A013-PT | 2d | 2026-12-01 | 2026-12-02 | RHD4CZ4A013PT2302 |

| ID | WBS | Task | Duration | Start | Finish | Predecessors |
| --- | --- | --- | --- | --- | --- | --- |
|  | 3076 | **RHD4-02-002-A013-(PT)-Air Valves** |  | 2026-12-01 | 2026-12-05 |  |
| RHD4CZ4A013PT3103 |  | Installation for Air Valves for Potable Water Network - (RD-A-1 /3)-Z4-A013-PT | 2d | 2026-12-01 | 2026-12-02 | RHD4CZ4A013PT2302, RHD4PRSHLDOSPT1200, RHD4PRSHLSTAGPT1200 |
| RHD4CZ4A013PT3203 |  | Stem and Service box for Air Valves for Potable Water Network - (RD-A-1 /3)-Z4-A013-PT | 2d | 2026-12-03 | 2026-12-05 | RHD4CZ4A013PT3103, RHD4CZ4A013PT2402, RHD4PRSHLDOSPT1300, RHD4PRSHLSTAGPT1300 |
|  | 3077 | **RHD4-02-002-A013-(PT)-Fire Hydrant** |  | 2026-12-20 | 2027-01-06 |  |
| RHD4CZ4A013PT4100 |  | Excavation and Bedding and Pipe Installation for Fire Hydrant - (RD-A-1 /3)-Z4-A013-PT | 5d | 2026-12-20 | 2026-12-24 | RHD4CZ4A013PT1503 SS, RHD4ENSDZ4APPPT130 |
| RHD4CZ4A013PT4200 |  | Valve Installation for Fire Hydrant - (RD-A-1 /3)-Z4-A013-PT | 3d | 2026-12-26 | 2026-12-28 | RHD4CZ4A013PT4100 |
| RHD4CZ4A013PT4300 |  | Stem for Fire Hydrant - (RD-A-1 /3)-Z4-A013-PT | 3d | 2026-12-29 | 2026-12-31 | RHD4CZ4A013PT4200 |
| RHD4CZ4A013PT4400 |  | Fire Installation for Fire Hydrant - (RD-A-1 /3)-Z4-A013-PT | 3d | 2027-01-02 | 2027-01-04 | RHD4CZ4A013PT4300, RHD4PRSHLDOSPT1500, RHD4PRSHLSTAGPT1500 |
| RHD4CZ4A013PT4500 |  | Protection Barriers for Fire Hydrant - (RD-A-1 /3)-Z4-A013-PT | 2d | 2027-01-05 | 2027-01-06 | RHD4CZ4A013PT4400 |
|  | 3078 | **RHD4-02-002-A013-(PT)-Concrete Encasement** |  |  |  |  |
|  | 3079 | **RHD4-02-002-Z4-A013-Irrigation Network - IRR** |  | 2026-11-24 | 2027-01-24 |  |
|  | 3083 | **RHD4-02-002-A013-(IRR)-HDPE Pipes - 250 mm diameter** |  | 2026-11-24 | 2027-01-07 |  |
| RHD4CZ4A013IRR1103 |  | Excavation works for HDPE Pipline 250 mm - (RD-A-1 /3)-Z4-A013-IRR | 10d | 2026-11-24 | 2026-12-05 | RHD4CZ4A013PT1103, RHD4ENSDZ4APPIRR140, RHD4ENMSRR2000 |
| RHD4CZ4A013IRR1203 |  | Bedding works for HDPE Pipline 250 mm - (RD-A-1 /3)-Z4-A013-IRR | 8d | 2026-12-06 | 2026-12-14 | RHD4CZ4A013IRR1103 |
| RHD4CZ4A013IRR1303 |  | Installing for HDPE Pipline 250 mm - (RD-A-1 /3)-Z4-A013-IRR | 10d | 2026-12-15 | 2026-12-26 | RHD4CZ4A013IRR1203, RHD4PRSHLDOSIRR1000, RHD4PRSHLSTAGIRR1000 |
| RHD4CZ4A013IRR1403 |  | Primary Test for HDPE Pipline 250 mm - (RD-A-1 /3)-Z4-A013-IRR | 3d | 2026-12-27 | 2026-12-29 | RHD4CZ4A013IRR1303 |
| RHD4CZ4A013IRR1503 |  | Backfilling and warning tape works for HDPE Pipline 250 mm - (RD-A-1 /3)-Z4-A013-IRR | 8d | 2026-12-30 | 2027-01-07 | RHD4CZ4A013IRR1403 |
|  | 3082 | **RHD4-02-002-A013-(IRR)-HDPE Pipes - 200 mm diameter** |  |  |  |  |
|  | 1770 | **RHD4-02-002-A013-(IRR)-Air Valves** |  | 2026-12-27 | 2026-12-30 |  |
| RHD4CZ4A013IRR3103 |  | Installation for Air Valves for Irrigation Network - (RD-A-1 /3)-Z4-A013-IRR | 2d | 2026-12-27 | 2026-12-28 | RHD4CZ4A013IRR1303, RHD4CZ4A013IRR2302 |
| RHD4CZ4A013IRR3203 |  | Stem and Service box for Air Valves for Irrigation Network - (RD-A-1 /3)-Z4-A013-IRR | 2d | 2026-12-29 | 2026-12-30 | RHD4CZ4A013IRR3103, RHD4CZ4A013IRR2402 |
|  | 6107 | **RHD4-02-002-A013-(IRR)-HDPE Pipes - 160 mm diameter** |  | 2027-01-09 | 2027-01-19 |  |
| RHD4CZ4A013IRR1100 |  | Excavation works for HDPE Pipline 160 mm - (RD-A-1 /3)-Z4-A013-IRR | 2d | 2027-01-09 | 2027-01-10 | RHD4CZ4A013IRR1103, RHD4CZ4A013IRR1503 |
| RHD4CZ4A013IRR1200 |  | Bedding works for HDPE Pipline 160 mm - (RD-A-1 /3)-Z4-A013-IRR | 2d | 2027-01-11 | 2027-01-12 | RHD4CZ4A013IRR1100 |
| RHD4CZ4A013IRR1300 |  | Installing for HDPE Pipline 160 mm - (RD-A-1 /3)-Z4-A013-IRR | 2d | 2027-01-13 | 2027-01-14 | RHD4CZ4A013IRR1200 |
| RHD4CZ4A013IRR1400 |  | Primary Test for HDPE Pipline 160 mm - (RD-A-1 /3)-Z4-A013-IRR | 2d | 2027-01-16 | 2027-01-17 | RHD4CZ4A013IRR1300 |
| RHD4CZ4A013IRR1500 |  | Backfilling and warning tape works for HDPE Pipline 160 mm - (RD-A-1 /3)-Z4-A013-IRR | 2d | 2027-01-18 | 2027-01-19 | RHD4CZ4A013IRR1400 |
|  | 6115 | **RHD4-02-002-A013-(IRR)-Gate Valves (Direct Buried)** |  | 2027-01-13 | 2027-01-24 |  |
| RHD4CZ4A013IRR3100 |  | Installation for Direct Buried Gate Valves - (RD-A-1 /3)-Z4-A013-IRR | 4d | 2027-01-13 | 2027-01-17 | RHD4CZ4A013IRR1300 SS, RHD4CZ4A013IRR1300 FF |
| RHD4CZ4A013IRR3200 |  | Stem and Service box for Direct Buried Gate Valves - (RD-A-1 /3)-Z4-A013-IRR | 4d | 2027-01-20 | 2027-01-24 | RHD4CZ4A013IRR3100, RHD4CZ4A013IRR1500 |
|  | 1769 | **RHD4-02-002-A013-(IRR)-Air Valve Chamber** |  | 2026-12-06 | 2026-12-14 |  |
| RHD4CZ4A013IRR2102 |  | Excavation and Bedding for Valve Chamber for Irrigation Network - (RD-A-1 /3)-Z4-A013-IRR | 2d | 2026-12-06 | 2026-12-07 | RHD4CZ4A013IRR1103 |
| RHD4CZ4A013IRR2202 |  | PC works for Valve Chamber for Irrigation Network - (RD-A-1 /3)-Z4-A013-IRR | 2d | 2026-12-08 | 2026-12-09 | RHD4CZ4A013IRR2102 |
| RHD4CZ4A013IRR2302 |  | Installation for Valve Chamber for Irrigation Network - (RD-A-1 /3)-Z4-A013-IRR | 2d | 2026-12-10 | 2026-12-12 | RHD4CZ4A013IRR2202 |
| RHD4CZ4A013IRR2402 |  | Backfilling works for Valve Chamber for Irrigation Network - (RD-A-1 /3)-Z4-A013-IRR | 2d | 2026-12-13 | 2026-12-14 | RHD4CZ4A013IRR2302 |
|  | 3113 | **RHD4-02-002-Z4-A013-Medium Voltage Network - MV** |  | 2026-08-23 | 2027-04-29 |  |
|  | 3115 | **RHD4-02-002-A013-(MV)-Medium Voltage duct banks** |  | 2026-08-23 | 2026-09-07 |  |
| RHD4CZ4A013MV2100 |  | Excavation of Duct Banks for Medium Voltage Network - (RD-A-1 /3)-Z4-A013-MV | 3d | 2026-08-23 | 2026-08-25 | RHD4ENSDZ4APPMV150, RHD4CZ4A013ST3500 |
| RHD4CZ4A013MV2200 |  | Installation of Duct Banks for Medium Voltage Network - (RD-A-1 /3)-Z4-A013-MV | 5d | 2026-08-26 | 2026-08-31 | RHD4CZ4A013MV2100, RHD4PRSHLDOSMV1000, RHD4PRSHLSTAGMV1000 |
| RHD4CZ4A013MV2300 |  | Pouring of Duct Banks for Medium Voltage Network - (RD-A-1 /3)-Z4-A013-MV | 3d | 2026-09-01 | 2026-09-03 | RHD4CZ4A013MV2200 |
| RHD4CZ4A013MV2400 |  | Backfilling of Duct Banks for Medium Voltage Network - (RD-A-1 /3)-Z4-A013-MV | 3d | 2026-09-05 | 2026-09-07 | RHD4CZ4A013MV2300 |
|  | 3114 | **RHD4-02-002-A013-(MV)-Medium Voltage cable trench** |  | 2027-02-28 | 2027-03-18 |  |
| RHD4CZ4A013MV1100 |  | Excavation for Medium Voltage Trench - (RD-A-1 /3)-Z4-A013-MV | 7d | 2027-02-28 | 2027-03-07 | RHD4ENSDZ4APPMV150, RHD4CZ4A013RD3100, RHD4CZ5L07LV3100 |
| RHD4CZ4A013MV1200 |  | Trench Backfilling for Medium Voltage Network - (RD-A-1 /3)-Z4-A013-MV | 7d | 2027-03-08 | 2027-03-18 | RHD4CZ4A013MV1100 |
|  | 3116 | **RHD4-02-002-A013-(MV)-Medium Voltage cables 3Cx 500 mm²** |  | 2027-03-08 | 2027-04-27 |  |
| RHD4CZ4A013MV3100 |  | Installation of Medium Voltage Cables 3Cx 500 mm² - (RD-A-1 /3)-Z4-A013-MV | 17d | 2027-03-08 | 2027-03-30 | RHD4CZ4A013MV1100, RHD4CZ4A013MV2400, RHD4PRSHLDOSMV1100, RHD4ENMSMV2000, RHD4ENMSMV2010, RHD4PRSHLSTAGMV1100 |
| RHD4CZ4A013MV3200 |  | Joints Installation of Medium Voltage Cables 3Cx 500 mm² - (RD-A-1 /3)-Z4-A013-MV | 13d | 2027-03-31 | 2027-04-14 | RHD4CZ4A013MV3100, RHD4PRSHLDOSMV1300, RHD4PRSHLSTAGMV1300 |
| RHD4CZ4A013MV3300 |  | Testing of Medium Voltage Cables 3Cx 500 mm² - (RD-A-1 /3)-Z4-A013-MV | 11d | 2027-04-15 | 2027-04-27 | RHD4CZ4A013MV3200, RHD4CZ4A013MV1200 |
|  | 5388 | **RHD4-02-002-A013-(MV)-Normally open Point (Outdoor Type)** |  |  |  |  |
|  | 1982 | **RHD4-02-002-A013-(MV)-Medium Voltage cables 3Cx 50 mm²** |  | 2027-04-28 | 2027-04-29 |  |
| RHD4CZ4A013MV3401 |  | Termination of Medium Voltage Cables 3Cx 50 mm² - (RD-A-1 /3)-Z4-A013-MV | 2d | 2027-04-28 | 2027-04-29 | RHD4CZ4A013MV3100, RHD4CZ4A013MV3300 |
|  | 4255 | **RHD4-02-002-Z4-A013-Low Voltage Network - LV** |  | 2026-12-08 | 2027-04-12 |  |
|  | 4256 | **RHD4-02-002-A013-(LV)-Low Voltage duct banks** |  | 2026-12-08 | 2026-12-17 |  |
| RHD4CZ4A013LV2100 |  | Excavation of Duct Banks for Low Voltage Network - (RD-A-1 /3)-Z4-A013-LV | 2d | 2026-12-08 | 2026-12-09 | RHD4CZ4A013IRR2102 |
| RHD4CZ4A013LV2200 |  | Installation of Duct Banks for Low Voltage Network - (RD-A-1 /3)-Z4-A013-LV | 3d | 2026-12-10 | 2026-12-13 | RHD4CZ4A013LV2100 |
| RHD4CZ4A013LV2300 |  | Pouring of Duct Banks for Low Voltage Network - (RD-A-1 /3)-Z4-A013-LV | 2d | 2026-12-14 | 2026-12-15 | RHD4CZ4A013LV2200 |
| RHD4CZ4A013LV2400 |  | Backfilling of Duct Banks for Low Voltage Network - (RD-A-1 /3)-Z4-A013-LV | 2d | 2026-12-16 | 2026-12-17 | RHD4CZ4A013LV2300 |
|  | 4257 | **RHD4-02-002-A013-(LV)-Low Voltage Drawpit** |  | 2027-04-08 | 2027-04-12 |  |
| RHD4CZ4A013LV5100 |  | Excavation of Drawpit size 900x900x1000mm for Low Voltage Network - (RD-A-1 /3)-Z4-A013-LV | 2d | 2027-04-08 | 2027-04-10 | RHD4CZ4A013LV4300, RHD4CZ4A013LV2300 |
| RHD4CZ4A013LV5200 |  | Installation of Drawpit size 900x900x1000mm for Low Voltage Network - (RD-A-1 /3)-Z4-A013-LV | 2d | 2027-04-11 | 2027-04-12 | RHD4CZ4A013LV5100 |
|  | 4258 | **RHD4-02-002-A013-(LV)-Low Voltage cables** |  | 2027-03-08 | 2027-03-31 |  |
| RHD4CZ4A013LV3100 |  | Excavation for Low Voltage Cables for Low Voltage Network - (RD-A-1 /3)-Z4-A013-LV | 5d | 2027-03-08 | 2027-03-16 | RHD4CZ4A013IRR2102, RHD4CZ4A013MV1100, RHD4CZ4A013IRR3203, RHD4CZ4A013IRR3200 |
| RHD4CZ4A013LV3200 |  | Cable Laying of Low Voltage Cables for Low Voltage Network - (RD-A-1 /3)-Z4-A013-LV | 5d | 2027-03-17 | 2027-03-22 | RHD4CZ4A013LV3100 |
| RHD4CZ4A013LV3300 |  | Warning tape and Backfill for Low Voltage Cables for Low Voltage Network - (RD-A-1 /3)-Z4-A013-LV | 5d | 2027-03-23 | 2027-03-28 | RHD4CZ4A013LV3200 |
| RHD4CZ4A013LV3400 |  | Testing of Low Voltage Cables for Low Voltage Network - (RD-A-1 /3)-Z4-A013-LV | 3d | 2027-03-29 | 2027-03-31 | RHD4CZ4A013LV3300 |
|  | 4259 | **RHD4-02-002-A013-(LV)-Low Voltage Distribution Pillars** |  | 2027-04-01 | 2027-04-07 |  |
| RHD4CZ4A013LV4100 |  | Leveling for Distribution Pillars for Low Voltage Network - (RD-A-1 /3)-Z4-A013-LV | 2d | 2027-04-01 | 2027-04-03 | RHD4CZ4A013LV3400, RHD4CZ4A013LV3300 |
| RHD4CZ4A013LV4200 |  | Lean Concrete for Distribution Pillars for Low Voltage Network - (RD-A-1 /3)-Z4-A013-LV | 2d | 2027-04-04 | 2027-04-05 | RHD4CZ4A013LV4100 |
| RHD4CZ4A013LV4300 |  | Installation of Distribution Pillars for Low Voltage Network - (RD-A-1 /3)-Z4-A013-LV | 2d | 2027-04-06 | 2027-04-07 | RHD4CZ4A013LV4200 |
|  | 3126 | **RHD4-02-002-Z4-A013-Street Lighting Network - SL** |  | 2026-12-10 | 2027-02-06 |  |

| ID | WBS | Task | Duration | Start | Finish | Predecessors |
| --- | --- | --- | --- | --- | --- | --- |
|  | 3127 | **RHD4-02-002-A013-(SL)-Street Lighting duct banks** |  | 2026-12-10 | 2026-12-23 |  |
| RHD4CZ4A013SL2100 |  | Excavation of Duct Banks for Street Lighting Network - (RD-A-1 /3)-Z4-A013-SL | 3d | 2026-12-10 | 2026-12-13 | RHD4ENSDZ4APPSL170, RHD4CZ4A013LV2100 |
| RHD4CZ4A013SL2200 |  | Installation of Duct Banks for Street Lighting Network - (RD-A-1 /3)-Z4-A013-SL | 4d | 2026-12-14 | 2026-12-17 | RHD4CZ4A013SL2100 |
| RHD4CZ4A013SL2300 |  | Pouring of Duct Banks for Street Lighting Network - (RD-A-1 /3)-Z4-A013-SL | 3d | 2026-12-19 | 2026-12-21 | RHD4CZ4A013SL2200 |
| RHD4CZ4A013SL2400 |  | Backfilling of Duct Banks for Street Lighting Network - (RD-A-1 /3)-Z4-A013-SL | 2d | 2026-12-22 | 2026-12-23 | RHD4CZ4A013SL2300 |
|  | 3129 | **RHD4-02-002-A013-(SL)-Street Lighting cables** |  | 2027-01-11 | 2027-02-06 |  |
| RHD4CZ4A013SL3100 |  | Excavation for Street Lighting Cables for Street Lighting Network - (RD-A-1 /3)-Z4-A013-SL | 7d | 2027-01-11 | 2027-01-18 | RHD4ENSDZ4APPSL170, RHD4CZ4A013IRR1100, RHD4CZ4A013SL1100 |
| RHD4CZ4A013SL3200 |  | Cable Laying of Street Lighting Cables for Street Lighting Network - (RD-A-1 /3)-Z4-A013-SL | 6d | 2027-01-19 | 2027-01-25 | RHD4CZ4A013SL3100, RHD4ENMSSL2000, RHD4ENMSSL2010 |
| RHD4CZ4A013SL3300 |  | Warning tape and Backfill for Street Lighting Cables for Street Lighting Network - (RD-A-1 /3)-Z4-A013-SL | 6d | 2027-01-26 | 2027-02-01 | RHD4CZ4A013SL3200 |
| RHD4CZ4A013SL3400 |  | Testing of Street Lighting Cables for Street Lighting Network - (RD-A-1 /3)-Z4-A013-SL | 4d | 2027-02-02 | 2027-02-06 | RHD4CZ4A013SL3300 |
|  | 3130 | **RHD4-02-002-A013-(SL)-Street Lighting Poles** |  | 2026-12-24 | 2027-01-24 |  |
| RHD4CZ4A013SL1100 |  | Excavation for RC Base for Lighting Poles for Street Lighting Network - (RD-A-1 /3)-Z4-A013-SL | 4d | 2026-12-24 | 2026-12-28 | RHD4CZ4A013SL2400, RHD4ENSDZ4APPSL170 |
| RHD4CZ4A013SL1200 |  | Installation for RC Base for Lighting Poles for Street Lighting Network - (RD-A-1 /3)-Z4-A013-SL | 4d | 2026-12-29 | 2027-01-02 | RHD4CZ4A013SL1100 |
| RHD4CZ4A013SL1300 |  | Backfill for RC Base for Lighting Poles for Street Lighting Network - (RD-A-1 /3)-Z4-A013-SL | 4d | 2027-01-03 | 2027-01-06 | RHD4CZ4A013SL1200 |
| RHD4CZ4A013SL1400 |  | Installation for Lighting Poles for Street Lighting Network - (RD-A-1 /3)-Z4-A013-SL | 6d | 2027-01-07 | 2027-01-13 | RHD4CZ4A013SL1300, RHD4PRSHLDOSSL1200, RHD4ENMSSL2000, RHD4ENMSSL2010, RHD4PRSHLSTAGSL1200 |
| RHD4CZ4A013SL1500 |  | Luminaire Installation for Lighting Poles for Street Lighting Network - (RD-A-1 /3)-Z4-A013-SL | 7d | 2027-01-17 | 2027-01-24 | RHD4CZ4A013SL1400, RHD4CZ4A013SL6100, RHD4PRSHLDOSSL1300, RHD4PRSHLSTAGSL1300 |
|  | 3132 | **RHD4-02-002-A013-(SL)-Street Lighting Earthing System** |  | 2027-01-14 | 2027-01-16 |  |
| RHD4CZ4A013SL6100 |  | Installation of Earthing for Lighting Poles and Fedder Pillers for Street Lighting Network - (RD-A-1 /3)-Z4-A013-SL | 2d | 2027-01-14 | 2027-01-16 | RHD4CZ4A013SL1400, RHD4ENMSER2000, RHD4ENMSER2010, RHD4CZ4A013SL5200 FF |
|  | 3128 | **RHD4-02-002-A013-(SL)-Street Lighting Drawpit** |  | 2026-12-29 | 2027-01-02 |  |
| RHD4CZ4A013SL5100 |  | Excavation of Drawpit size 600x600x900mm for Street Lighting Network - (RD-A-1 /3)-Z4-A013-SL | 2d | 2026-12-29 | 2026-12-30 | RHD4CZ4A013SL2300, RHD4ENSDZ4APPSL170, RHD4CZ4A013SL1100 |
| RHD4CZ4A013SL5200 |  | Installation of Drawpit size 600x600x900mm for Street Lighting Network - (RD-A-1 /3)-Z4-A013-SL | 2d | 2026-12-31 | 2027-01-02 | RHD4CZ4A013SL5100, RHD4PRSHLDOSSL1400, RHD4PRSHLSTAGSL1400 |
|  | 3138 | **RHD4-02-002-Z4-A013-Telecommunications Network - TC** |  | 2027-01-07 | 2027-02-13 |  |
|  | 3139 | **RHD4-02-002-A013-(TC)-Telecommunications Ducts** |  | 2027-01-07 | 2027-02-13 |  |
| RHD4CZ4A013TC2100 |  | Excavation of HDPE Ducts for Telecom Network - (RD-A-1 /3)-Z4-A013-TC | 9d | 2027-01-07 | 2027-01-17 | RHD4ENSDZ4APPTC190, RHD4CZ4A013IRR2102, RHD4CZ4A013SL1300, RHD4CZ4A013IRR3203 |
| RHD4CZ4A013TC2200 |  | Installation of HDPE Ducts for Telecom Network - (RD-A-1 /3)-Z4-A013-TC | 14d | 2027-01-18 | 2027-02-02 | RHD4CZ4A013TC2100, RHD4PRSHLDOSTC1000, RHD4PRSHLSTAGTC1000 |
| RHD4CZ4A013TC2400 |  | Backfilling of HDPE Ducts for Telecom Network - (RD-A-1 /3)-Z4-A013-TC | 9d | 2027-02-03 | 2027-02-13 | RHD4CZ4A013TC2200, RHD4CZ4A013TC5200, RHD4CZ4A013IRR3200 |
|  | 3140 | **RHD4-02-002-A013-(TC)-Telecommunications Manholes** |  | 2027-01-18 | 2027-01-24 |  |
| RHD4CZ4A013TC5100 |  | Excavation for Manholes for Telecom Network - (RD-A-1 /3)-Z4-A013-TC | 3d | 2027-01-18 | 2027-01-20 | RHD4CZ4A013TC2100, RHD4ENSDZ4APPTC190 |
| RHD4CZ4A013TC5200 |  | Installation of Manholes for Telecom Network - (RD-A-1 /3)-Z4-A013-TC | 3d | 2027-01-21 | 2027-01-24 | RHD4CZ4A013TC5100, RHD4CZ4A013TC2200 SS, RHD4PRSHLDOSTC1200, RHD4PRSHLSTAGTC1200 |
|  | 5411 | **RHD4-02-002-A013-(TC)-Telecomminications Road Crossings** |  |  |  |  |
|  | 3142 | **RHD4-02-002-Z4-A013-Information and Communication Technologies - ICT** |  | 2026-12-14 | 2027-04-03 |  |
|  | 3143 | **RHD4-02-002-A013-(ICT)-Information and Communication Technologies Ducts** |  | 2027-02-02 | 2027-04-03 |  |
| RHD4CZ4A013ICT2100 |  | Excavation of HDPE Ducts for ICT Network - (RD-A-1 /3)-Z4-A013-ICT | 17d | 2027-02-02 | 2027-02-21 | RHD4CZ4A013SL3300, RHD4ENSDZ4APPICT200, RHD4CZ4A013SL6100, RHD4CZ4A013SL1500 |
| RHD4CZ4A013ICT2200 |  | Installation of HDPE Ducts for ICT Network - (RD-A-1 /3)-Z4-A013-ICT | 11d | 2027-02-23 | 2027-03-07 | RHD4CZ4A013ICT2100, RHD4PRSHLDOSICT1000, RHD4PRSHLSTAGICT1000 |
| RHD4CZ4A013ICT2400 |  | Backfilling of HDPE Ducts for ICT Network - (RD-A-1 /3)-Z4-A013-ICT | 17d | 2027-03-15 | 2027-04-03 | RHD4CZ4A013ICT2200, RHD4CZ4A013ICT5200 |
|  | 3144 | **RHD4-02-002-A013-(ICT)-Information and Communication Technologies Manholes** |  | 2027-02-23 | 2027-03-14 |  |
| RHD4CZ4A013ICT5100 |  | Excavation for Manholes for ICT Network - (RD-A-1 /3)-Z4-A013-ICT | 7d | 2027-02-23 | 2027-03-02 | RHD4CZ4A013ICT2100, RHD4ENSDZ4APPICT200, RHD4CZ4A013SL3400 |
| RHD4CZ4A013ICT5200 |  | Installation of Manholes for ICT Network - (RD-A-1 /3)-Z4-A013-ICT | 7d | 2027-03-03 | 2027-03-14 | RHD4CZ4A013ICT5100, RHD4CZ4A013ICT2200 SS, RHD4PRSHLDOSICT1200, RHD4PRSHLSTAGICT1200 |
|  | 5415 | **RHD4-02-002-A013-(ICT)-Information and Communication Technologies Road Crossings** |  | 2026-12-14 | 2027-01-07 |  |
| RHD4CZ4A013ICT3100 |  | Excavation for Road Crossings for ICT Network - (RD-A-1 /3)-Z4-A013-ICT | 5d | 2026-12-14 | 2026-12-19 | RHD4ENSDZ4APPICT200, RHD4CZ4A013SL2100 |
| RHD4CZ4A013ICT3200 |  | Installation of Road Crossings for ICT Network - (RD-A-1 /3)-Z4-A013-ICT | 6d | 2026-12-20 | 2026-12-26 | RHD4CZ4A013ICT3100 |
| RHD4CZ4A013ICT3300 |  | Pouring of Road Crossings for ICT Network - (RD-A-1 /3)-Z4-A013-ICT | 6d | 2026-12-27 | 2027-01-02 | RHD4CZ4A013ICT3200 |
| RHD4CZ4A013ICT3400 |  | Backfilling of Road Crossings for ICT Network - (RD-A-1 /3)-Z4-A013-ICT | 5d | 2027-01-03 | 2027-01-07 | RHD4CZ4A013ICT3300 |
|  | 3133 | **RHD4-02-002-Z4-A013-Landscape Network - LS** |  |  |  |  |
|  | 3134 | **RHD4-02-002-A013-(LS)-Landscape Lighting cables** |  |  |  |  |
|  | 3135 | **RHD4-02-002-A013-(LS)-Landscape Feeder Pillars** |  |  |  |  |
|  | 3136 | **RHD4-02-002-A013-(LS)-Landscape Bollard Poles** |  |  |  |  |
|  | 3137 | **RHD4-02-002-A013-(LS)-Landscape Feeder Pillars Earthing** |  |  |  |  |
|  | 3146 | **RHD4-02-002-Z4-A013-Security Network - CCTV** |  |  |  |  |
|  | 3147 | **RHD4-02-002-A013-(CCTV)-Civil Works** |  |  |  |  |
|  | 3148 | **RHD4-02-002-A013-(CCTV)-CCTV Poles** |  |  |  |  |
|  | 3149 | **RHD4-02-002-A013-(CCTV)-Camera** |  |  |  |  |
|  | 3150 | **RHD4-02-002-A013-(CCTV)-Power and Infrastructure** |  |  |  |  |
|  | 3152 | **RHD4-02-002-A013-(CCTV)-CCTV Panels and Components** |  |  |  |  |
|  | 3163 | **RHD4-02-002-Z4-RA02** |  | 2026-08-24 | 2027-03-28 |  |
|  | 3342 | **RHD4-02-002-Z4-RA02-Road Works - RD** |  | 2026-08-24 | 2027-03-28 |  |
|  | 3343 | **RHD4-02-002-RA02-(RD)-Subgrade** |  | 2026-08-24 | 2026-08-29 |  |
| RHD4CZ4RA02RD1100 |  | Supply, lay and compaction subgrade compacted thickness 300 mm for Roads - (ROUND-02)-Z4-RA02-RD | 5d | 2026-08-24 | 2026-08-29 | RHD4ENSDZ4APPRD220, RHD4CZ4A013RD1100, RHD4ENSDZ4APPEW100 SS |
|  | 3344 | **RHD4-02-002-RA02-(RD)-Aggregate Base Course** |  | 2026-08-30 | 2026-09-03 |  |
| RHD4CZ4RA02RD2100 |  | Supply, lay and compaction Aggregate base course compacted thickness 300 mmfor Roads - (ROUND-02)-Z4-RA02-RD | 5d | 2026-08-30 | 2026-09-03 | RHD4CZ4RA02RD1100 |
|  | 3345 | **RHD4-02-002-RA02-(RD)-Bituminous base course Two Layers, including (MC1)&(RC2)** |  | 2026-09-05 | 2027-02-15 |  |
| RHD4CZ4RA02RD3100 |  | Supply, lay and Asphaltic base course including Prime Coat (MC1) for 1st Layer - (ROUND-02)-Z4-RA02-RD | 3d | 2026-09-05 | 2026-09-07 | RHD4CZ4RA02RD2100, RHD4PRSHLDOSRD1100, RHD4ENMSASPH2000, RHD4ENMSASPH2010, RHD4PRSHLSTAGRD1100 |
| RHD4CZ4RA02RD3200 |  | Supply, lay and Asphaltic base course including Tack Coat (RC2) for 2nd Layer - (ROUND-02)-Z4-RA02-RD | 3d | 2027-02-13 | 2027-02-15 | RHD4CZ4RA02RD3100, RHD4PRSHLDOSRD1100, RHD4PRSHLSTAGRD1100, RHD4CZ4RA02CCTV2100, RHD4CZ4RA02CCTV6100 |
|  | 3347 | **RHD4-02-002-RA02-(RD)-Precast Concrete Curb** |  | 2027-02-16 | 2027-02-23 |  |
| RHD4CZ4RA02RD5100 |  | Supply and installation Precast Concrete Kerb for Roads - (ROUND-02)-Z4-RA02-RD | 6d | 2027-02-16 | 2027-02-23 | RHD4CZ4RA02RD3200, RHD4PRSHLDOSRD1200, RHD4ENMSRD2000, RHD4ENMSRD2010, RHD4PRSHLSTAGRD1200 |
|  | 3350 | **RHD4-02-002-RA02-(RD)-Traffic Signage** |  | 2027-02-24 | 2027-03-07 |  |
| RHD4CZ4RA02RD8100 |  | Installation of Traffic Signage for Road Network - (ROUND-02)-Z4-RA02-RD | 10d | 2027-02-24 | 2027-03-07 | RHD4CZ4RA02RD5100, RHD4PRSHLDOSRD1600, RHD4PRSHLDOSST1401, RHD4PRSHLDOSRD1500, RHD4PRSHLSTAGRD1600, RHD4PRSHLSTAGRD1500 |
|  | 3348 | **RHD4-02-002-RA02-(RD)-Precast Interlocking Block Pavers** |  |  |  |  |
|  | 3346 | **RHD4-02-002-RA02-(RD)-Bituminous concrete wearing course including tack coat (RC2)** |  | 2027-02-24 | 2027-02-25 |  |
| RHD4CZ4RA02RD4100 |  | Supply, lay and compaction Asphaltic wearing course including tack Coat (RC2)for Road Network - (ROUND-02)-Z4-RA02-RD | 2d | 2027-02-24 | 2027-02-25 | RHD4CZ4RA02RD5100 |

| ID | WBS | Task | Duration | Start | Finish | Predecessors |
| --- | --- | --- | --- | --- | --- | --- |
|  | 3349 | **RHD4-02-002-RA02-(RD)-Pavement Marking** |  | 2027-02-27 | 2027-03-28 |  |
| RHD4CZ4RA02RD7100 |  | Pavement Markings for Road Network - (ROUND-02)-Z4-RA02-RD | 8d | 2027-02-27 | 2027-03-07 | RHD4CZ4RA02RD4100, RHD4PRSHLDOSRD1500, RHD4PRSHLSTAGRD1500 |
| RHD4CZ4RA02RD9100 |  | Installation for Speed Bump for Road Network - (ROUND-02)-Z4-RA02-RD | 15d | 2027-03-08 | 2027-03-28 | RHD4CZ4RA02RD8100, RHD4CZ4RA02SL5200 |
|  | 3167 | **RHD4-02-002-Z4-RA02-Storm Network - ST** |  |  |  |  |
|  | 3186 | **RHD4-02-002-RA02-(ST)-MH Works - 2000 mm diameter** |  |  |  |  |
|  | 3185 | **RHD4-02-002-RA02-(ST)-MH Works - 1500 mm diameter** |  |  |  |  |
|  | 3184 | **RHD4-02-002-RA02-(ST)-MH Works - 1200 mm diameter** |  |  |  |  |
|  | 3175 | **RHD4-02-002-RA02-(ST)-GRP Pipes - 1100 mm diameter** |  |  |  |  |
|  | 3173 | **RHD4-02-002-RA02-(ST)-GRP Pipes - 900 mm diameter** |  |  |  |  |
|  | 3168 | **RHD4-02-002-RA02-(ST)-GRP Pipes - 400 mm diameter** |  |  |  |  |
|  | 3183 | **RHD4-02-002-RA02-(ST)-UPVC Pipes - 400 mm diameter** |  |  |  |  |
|  | 3182 | **RHD4-02-002-RA02-(ST)-UPVC Pipes - 300 mm diameter** |  |  |  |  |
|  | 3190 | **RHD4-02-002-RA02-(ST)-Concrete Encasement** |  |  |  |  |
|  | 3191 | **RHD4-02-002-Z4-RA02-Catch Basin - ST** |  |  |  |  |
|  | 3192 | **RHD4-02-002-RA02-(ST)-Single Catch Basin Works** |  |  |  |  |
|  | 3193 | **RHD4-02-002-RA02-(ST)-Double Catch Basin Works** |  |  |  |  |
|  | 1978 | **RHD4-02-002-Z4-RA02-Medium Voltage Network - MV** |  |  |  |  |
|  | 1979 | **RHD4-02-002-RA02-(MV)-Medium Voltage cable trench** |  |  |  |  |
|  | 1981 | **RHD4-02-002-RA02-(MV)-Medium Voltage cables 3Cx 500 mm²** |  |  |  |  |
|  | 3309 | **RHD4-02-002-Z4-RA02-Low Voltage Network - LV** |  |  |  |  |
|  | 3312 | **RHD4-02-002-RA02-(LV)-Low Voltage cables** |  |  |  |  |
|  | 4259 | **RHD4-02-002-RA02-(LV)-Low Voltage Distribution Pillars** |  |  |  |  |
|  | 3315 | **RHD4-02-002-Z4-RA02-Street Lighting Network - SL** |  | 2026-12-14 | 2027-01-17 |  |
|  | 3316 | **RHD4-02-002-RA02-(SL)-Street Lighting duct banks** |  | 2026-12-14 | 2026-12-27 |  |
| RHD4CZ4RA02SL2100 |  | Excavation of Duct Banks for Street Lighting Network - (ROUND-02)-Z4-RA02-SL | 3d | 2026-12-14 | 2026-12-16 | RHD4CZ4RA02RA3000, RHD4ENSDZ4APPSL170, RHD4CZ4A013SL2100 |
| RHD4CZ4RA02SL2200 |  | Installation of Duct Banks for Street Lighting Network - (ROUND-02)-Z4-RA02-SL | 4d | 2026-12-17 | 2026-12-21 | RHD4CZ4RA02SL2100, RHD4PRSHLDOSSL1000, RHD4PRSHLSTAGSL1000 |
| RHD4CZ4RA02SL2300 |  | Pouring of Duct Banks for Street Lighting Network - (ROUND-02)-Z4-RA02-SL | 3d | 2026-12-22 | 2026-12-24 | RHD4CZ4RA02SL2200 |
| RHD4CZ4RA02SL2400 |  | Backfilling of Duct Banks for Street Lighting Network - (ROUND-02)-Z4-RA02-SL | 2d | 2026-12-26 | 2026-12-27 | RHD4CZ4RA02SL2300 |
|  | 3318 | **RHD4-02-002-RA02-(SL)-Street Lighting cables** |  | 2026-12-17 | 2026-12-26 |  |
| RHD4CZ4RA02SL3100 |  | Excavation for Street Lighting Cables for Street Lighting Network - (ROUND-02)-Z4-RA02-SL | 2d | 2026-12-17 | 2026-12-19 | RHD4ENSDZ4APPSL170, RHD4CZ4RA02SL2100, RHD4CZ4RA02RD3100 |
| RHD4CZ4RA02SL3200 |  | Cable Laying of Street Lighting Cables for Street Lighting Network - (ROUND-02)-Z4-RA02-SL | 2d | 2026-12-20 | 2026-12-21 | RHD4CZ4RA02SL3100, RHD4PRSHLDOSSL1100, RHD4ENMSSL2000, RHD4ENMSSL2010, RHD4PRSHLSTAGSL1100 |
| RHD4CZ4RA02SL3300 |  | Warning tape and Backfill for Street Lighting Cables for Street Lighting Network - (ROUND-02)-Z4-RA02-SL | 2d | 2026-12-22 | 2026-12-23 | RHD4CZ4RA02SL3200 |
| RHD4CZ4RA02SL3400 |  | Testing of Street Lighting Cables for Street Lighting Network - (ROUND-02)-Z4-RA02-SL | 2d | 2026-12-24 | 2026-12-26 | RHD4CZ4RA02SL3300 |
|  | 3319 | **RHD4-02-002-RA02-(SL)-Street Lighting Poles** |  | 2026-12-28 | 2027-01-07 |  |
| RHD4CZ4RA02SL1100 |  | Excavation for RC Base for Lighting Poles for Street Lighting Network - (ROUND-02)-Z4-RA02-SL | 2d | 2026-12-28 | 2026-12-29 | RHD4CZ4RA02SL2400, RHD4ENSDZ4APPSL170, RHD4CZ4RA02SL3100 |
| RHD4CZ4RA02SL1200 |  | Installation for RC Base for Lighting Poles for Street Lighting Network - (ROUND-02)-Z4-RA02-SL | 2d | 2026-12-30 | 2026-12-31 | RHD4CZ4RA02SL1100 |
| RHD4CZ4RA02SL1300 |  | Backfill for RC Base for Lighting Poles for Street Lighting Network - (ROUND-02)-Z4-RA02-SL | 2d | 2027-01-02 | 2027-01-03 | RHD4CZ4RA02SL1200 |
| RHD4CZ4RA02SL1400 |  | Installation for Lighting Poles for Street Lighting Network - (ROUND-02)-Z4-RA02-SL | 2d | 2027-01-04 | 2027-01-05 | RHD4CZ4RA02SL1300, RHD4CZ4RA02SL3400, RHD4PRSHLDOSSL1200, RHD4ENMSSL2000, RHD4ENMSSL2010, RHD4PRSHLSTAGSL1200 |
| RHD4CZ4RA02SL1500 |  | Luminaire Installation for Lighting Poles for Street Lighting Network - (ROUND-02)-Z4-RA02-SL | 2d | 2027-01-06 | 2027-01-07 | RHD4CZ4RA02SL1400, RHD4PRSHLDOSSL1300, RHD4PRSHLSTAGSL1300 |
|  | 5023 | **RHD4-02-002-RA02-(SL)-Street Lighting Feeder Pillars** |  | 2027-01-09 | 2027-01-14 |  |
| RHD4CZ4RA02SL4100 |  | Leveling for Distribution Pillars for Street Lighting Network - (ROUND-02)-Z4-RA02-SL | 2d | 2027-01-09 | 2027-01-10 | RHD4CZ4RA02SL1500, RHD4CZ4RA02SL3300 |
| RHD4CZ4RA02SL4200 |  | Lean Concrete for Distribution Pillars for Street Lighting Network - (ROUND-02)-Z4-RA02-SL | 2d | 2027-01-11 | 2027-01-12 | RHD4CZ4RA02SL4100 |
| RHD4CZ4RA02SL4300 |  | Installation of Distribution Pillars for Street Lighting Network - (ROUND-02)-Z4-RA02-SL | 2d | 2027-01-13 | 2027-01-14 | RHD4CZ4RA02SL4200 |
|  | 5024 | **RHD4-02-002-RA02-(SL)-Street Lighting Earthing System** |  | 2027-01-16 | 2027-01-17 |  |
| RHD4CZ4RA02SL6100 |  | Installation of Earthing for Lighting Poles and Fedder Pillers for Street Lighting Network - (ROUND-02)-Z4-RA02-SL | 2d | 2027-01-16 | 2027-01-17 | RHD4CZ4RA02SL4300 FF, RHD4CZ4RA02SL4300 |
|  | 3317 | **RHD4-02-002-RA02-(SL)-Street Lighting Drawpit** |  | 2026-12-26 | 2026-12-29 |  |
| RHD4CZ4RA02SL5100 |  | Excavation of Drawpit size 600x600x900mm for Street Lighting Network - (ROUND-02)-Z4-RA02-SL | 2d | 2026-12-26 | 2026-12-27 | RHD4CZ4RA02SL2300, RHD4ENSDZ4APPSL170, RHD4CZ4RA02RD3100 |
| RHD4CZ4RA02SL5200 |  | Installation of Drawpit size 600x600x900mm for Street Lighting Network - (ROUND-02)-Z4-RA02-SL | 2d | 2026-12-28 | 2026-12-29 | RHD4CZ4RA02SL5100, RHD4PRSHLDOSSL1400, RHD4PRSHLSTAGSL1400 |
|  | 3322 | **RHD4-02-002-Z4-RA02-Landscape Network - LS** |  |  |  |  |
|  | 3323 | **RHD4-02-002-RA02-(LS)-Landscape Lighting cables** |  |  |  |  |
|  | 3324 | **RHD4-02-002-RA02-(LS)-Landscape Feeder Pillars** |  |  |  |  |
|  | 3325 | **RHD4-02-002-RA02-(LS)-Landscape Bollard Poles** |  |  |  |  |
|  | 3326 | **RHD4-02-002-RA02-(LS)-Landscape Feeder Pillars Earthing** |  |  |  |  |
|  | 3335 | **RHD4-02-002-Z4-RA02-Security Network - CCTV** |  | 2027-01-18 | 2027-02-11 |  |
|  | 3336 | **RHD4-02-002-RA02-(CCTV)-Civil Works** |  | 2027-01-18 | 2027-01-28 |  |
| RHD4CZ4RA02CCTV2100 |  | Civil Works for Security Network - (ROUND-02)-Z4-RA02-CCTV | 10d | 2027-01-18 | 2027-01-28 | RHD4CZ4RA02SL6100 |
|  | 2959 | **RHD4-02-002-RA02-(CCTV)-CCTV Poles** |  | 2027-01-18 | 2027-01-28 |  |
| RHD4CZ4RA02CCTV1100 |  | Excavation for RC Base for CCTV Poles for Security Network - (RD-C-3/1)-Z4-C031-CCTV | 2d | 2027-01-18 | 2027-01-19 | RHD4CZ4RA02SL5200, RHD4CZ4RA02SL6100 |
| RHD4CZ4RA02CCTV1200 |  | Installation for RC Base for CCTV Poles for Security Network - (RD-C-3/1)-Z4-C031-CCTV | 2d | 2027-01-20 | 2027-01-21 | RHD4CZ4RA02CCTV1100 |
| RHD4CZ4RA02CCTV1300 |  | Backfill for RC Base for CCTV Poles for Security Network - (RD-C-3/1)-Z4-C031-CCTV | 2d | 2027-01-23 | 2027-01-24 | RHD4CZ4RA02CCTV1200 |
| RHD4CZ4RA02CCTV1400 |  | Installation for CCTV Poles for Security Network - (RD-C-3/1)-Z4-C031-CCTV | 2d | 2027-01-25 | 2027-01-26 | RHD4CZ4RA02CCTV1300 |
| RHD4CZ4RA02CCTV1500 |  | Protection post Installation for CCTV Poles for Security Network - (RD-C-3/1)-Z4-C031-CCTV | 2d | 2027-01-27 | 2027-01-28 | RHD4CZ4RA02CCTV1400 |
|  | 2960 | **RHD4-02-002-RA02-(CCTV)-Camera** |  | 2027-01-30 | 2027-01-31 |  |
| RHD4CZ4RA02CCTV3100 |  | Installation for Cameras for Security Network - (RD-C-3/1)-Z4-C031-CCTV | 2d | 2027-01-30 | 2027-01-31 | RHD4CZ4RA02CCTV1400, RHD4CZ4RA02CCTV4100 |
|  | 2961 | **RHD4-02-002-RA02-(CCTV)-Power and Infrastructure** |  | 2027-01-27 | 2027-01-31 |  |
| RHD4CZ4RA02CCTV4100 |  | Installation of Power outlet, UPS and midspan for PTZ Camerafor Cameras for Security Network - (RD-C-3/1)-Z4-C031-CCTV | 2d | 2027-01-27 | 2027-01-28 | RHD4CZ4RA02CCTV1400 |
| RHD4CZ4RA02CCTV4200 |  | Short Range Wireless PoP wireless Bridgefor CCTV Poles for Security Network - (RD-C-3/1)-Z4-C031-CCTV | 2d | 2027-01-30 | 2027-01-31 | RHD4CZ4RA02CCTV4100 |
|  | 2963 | **RHD4-02-002-RA02-(CCTV)-CCTV Panels and Components** |  | 2027-02-01 | 2027-02-11 |  |
| RHD4CZ4RA02CCTV6100 |  | Installation for CCTV Panels for Security Network - (RD-C-3/1)-Z4-C031-CCTV | 10d | 2027-02-01 | 2027-02-11 | RHD4CZ4RA02CCTV4200, RHD4CZ4RA02CCTV3100 |
|  | 2785 | **RHD4-02-002-Z4-C031** |  | 2026-08-13 | 2027-03-03 |  |

| ID | WBS | Task | Duration | Start | Finish | Predecessors |
| --- | --- | --- | --- | --- | --- | --- |
|  | 2860 | **RHD4-02-002-Z4-C031-Crossings Potable Network - PTCr** |  |  |  |  |
|  | 2864 | **RHD4-02-002-C031-(PTCr)-HDPE Pipes - 400 mm diameter** |  |  |  |  |
|  | 2964 | **RHD4-02-002-Z4-C031-Road Works - RD** |  | 2026-08-25 | 2027-03-03 |  |
|  | 2965 | **RHD4-02-002-C031-(RD)-Subgrade** |  | 2026-08-25 | 2026-09-07 |  |
| RHD4CZ4C031RD1100 |  | Supply, lay and compaction subgrade compacted thickness 300 mm for Roads - (RD-C-3/1)-Z4-C031-RD | 12d | 2026-08-25 | 2026-09-07 | RHD4ENSDZ4APPRD220, RHD4ENSDZ4APPEW100 SS, RHD4CZ4C031ST3302, RHD4CZ4C031ICT3400 |
|  | 2966 | **RHD4-02-002-C031-(RD)-Aggregate Base Course** |  | 2026-09-08 | 2026-09-09 |  |
| RHD4CZ4C031RD2100 |  | Supply, lay and compaction Aggregate base course compacted thickness 300 mmfor Roads - (RD-C-3/1)-Z4-C031-RD | 2d | 2026-09-08 | 2026-09-09 | RHD4PRSHLDOSRD1000, RHD4PRSHLSTAGRD1000, RHD4CZ4C031RD1100 |
|  | 2967 | **RHD4-02-002-C031-(RD)-Bituminous base course Two Layers, including (MC1)&(RC2)** |  | 2026-09-10 | 2027-02-17 |  |
| RHD4CZ4C031RD3100 |  | Supply, lay and Asphaltic base course including Prime Coat (MC1) for 1st Layer - (RD-C-3/1)-Z4-C031-RD | 2d | 2026-09-10 | 2026-09-12 | RHD4CZ4C031RD2100, RHD4PRSHLDOSRD1100, RHD4ENMSASPH2000, RHD4ENMSASPH2010, RHD4PRSHLSTAGRD1100 |
| RHD4CZ4C031RD3200 |  | Supply, lay and Asphaltic base course including Tack Coat (RC2) for 2nd Layer - (RD-C-3/1)-Z4-C031-RD | 2d | 2027-02-16 | 2027-02-17 | RHD4CZ4C031RD3100, RHD4CZ4RA02RD3200, RHD4PRSHLDOSRD1100, RHD4PRSHLSTAGRD1100, RHD4CZ4C031CCTV4200 |
|  | 2969 | **RHD4-02-002-C031-(RD)-Precast Concrete Curb** |  | 2027-02-18 | 2027-02-23 |  |
| RHD4CZ4C031RD5100 |  | Supply and installation Precast Concrete Kerb for Roads - (RD-C-3/1)-Z4-C031-RD | 4d | 2027-02-18 | 2027-02-23 | RHD4CZ4C031RD3200, RHD4PRSHLDOSRD1200, RHD4ENMSRD2000, RHD4ENMSRD2010, RHD4PRSHLSTAGRD1200 |
|  | 2972 | **RHD4-02-002-C031-(RD)-Traffic Signage** |  | 2027-02-24 | 2027-03-02 |  |
| RHD4CZ4C031RD8100 |  | Installation of Traffic Signage for Road Network - (RD-C-3/1)-Z4-C031-RD | 6d | 2027-02-24 | 2027-03-02 | RHD4CZ4C031RD5100, RHD4CZ4C031TC2400, RHD4CZ4C031ICT2400, RHD4PRSHLDOSRD1600, RHD4PRSHLSTAGRD1600, RHD4CZ4C031SL5200 |
|  | 2970 | **RHD4-02-002-C031-(RD)-Precast Interlocking Block Pavers** |  |  |  |  |
|  | 2968 | **RHD4-02-002-C031-(RD)-Bituminous concrete wearing course including tack coat (RC2)** |  | 2027-02-24 | 2027-02-25 |  |
| RHD4CZ4C031RD4100 |  | Supply, lay and compaction Asphaltic wearing course including tack Coat (RC2)for Road Network - (RD-C-3/1)-Z4-C031-RD | 2d | 2027-02-24 | 2027-02-25 | RHD4CZ4C031RD5100 |
|  | 2973 | **RHD4-02-002-C031-(RD)-Speed Table and Wheel Stopper** |  |  |  |  |
|  | 2971 | **RHD4-02-002-C031-(RD)-Pavement Marking** |  | 2027-02-27 | 2027-03-03 |  |
| RHD4CZ4C031RD7100 |  | Pavement Markings for Road Network - (RD-C-3/1)-Z4-C031-RD | 5d | 2027-02-27 | 2027-03-03 | RHD4CZ4C031RD4100, RHD4PRSHLDOSRD1500, RHD4PRSHLSTAGRD1500 |
|  | 2789 | **RHD4-02-002-Z4-C031-Storm Network - ST** |  | 2026-08-13 | 2026-11-28 |  |
|  | 2430 | **RHD4-02-002-C031-(ST)-MH Works - 2000 mm diameter** |  | 2026-08-13 | 2026-08-24 |  |
| RHD4CZ4C031ST3102 |  | Excavation and PC Blinding works for MH 2000 mm - (RD-C-3/1)-Z4-C031-ST | 2d | 2026-08-13 | 2026-08-15 | RHD4CZ4A013ST3100, RHD4CZ5L016ST2500, RHD4CZ6A02ST1500, RHD4CZ5L016ST3501, RHD4PRSHLSTAGTC1200 |
| RHD4CZ4C031ST3202 |  | Installation of Base for MH 2000 mm - (RD-C-3/1)-Z4-C031-ST | 2d | 2026-08-16 | 2026-08-17 | RHD4CZ4C031ST3102 |
| RHD4CZ4C031ST3302 |  | MH Ring and C.Slab works and Backfilling works for MH 2000 mm - (RD-C-3/1)-Z4-C031-ST | 2d | 2026-08-18 | 2026-08-19 | RHD4CZ4C031ST3202 |
| RHD4CZ4C031ST3402 |  | Steel Cover for MH 2000 mm - (RD-C-3/1)-Z4-C031-ST | 2d | 2026-08-20 | 2026-08-22 | RHD4CZ4C031ST3302 |
| RHD4CZ4C031ST3502 |  | Finishing, Benching, Testing works for MH 2000 mm - (RD-C-3/1)-Z4-C031-ST | 2d | 2026-08-23 | 2026-08-24 | RHD4CZ4C031ST3402 |
|  | 2427 | **RHD4-02-002-C031-(ST)-UPVC Pipes - 400 mm diameter** |  | 2026-08-16 | 2026-08-26 |  |
| RHD4CZ4C031ST2101 |  | Excavation works for UPVC Pipe Line 400 mm - (RD-C-3/1)-Z4-C031-ST | 2d | 2026-08-16 | 2026-08-17 | RHD4CZ4C031ST3102, RHD4CZ5L016ST8500, RHD4CZ5L07ST8500, RHD4CZ5A014ST8500, RHD4CZ5C051ST8500 |
| RHD4CZ4C031ST2201 |  | Bedding works for UPVC Pipe Line 400 mm - (RD-C-3/1)-Z4-C031-ST | 2d | 2026-08-18 | 2026-08-19 | RHD4CZ4C031ST2101 |
| RHD4CZ4C031ST2301 |  | Installing for UPVC Pipe Line 400 mm - (RD-C-3/1)-Z4-C031-ST | 2d | 2026-08-20 | 2026-08-22 | RHD4CZ4C031ST2201 |
| RHD4CZ4C031ST2401 |  | Primary Test for UPVC Pipe Line 400 mm - (RD-C-3/1)-Z4-C031-ST | 2d | 2026-08-23 | 2026-08-24 | RHD4CZ4C031ST2301 |
| RHD4CZ4C031ST2501 |  | Backfilling and warning tape works for UPVC Pipe Line 400 mm - (RD-C-3/1)-Z4-C031-ST | 2d | 2026-08-25 | 2026-08-26 | RHD4CZ4C031ST3502, RHD4CZ4C031ST2401 |
|  | 2420 | **RHD4-02-002-C031-(ST)-GRP Pipes - 1200 mm diameter** |  | 2026-08-18 | 2026-08-29 |  |
| RHD4CZ4C031ST1108 |  | Excavation works for GRP Pipe Line 1200 mm - (RD-C-3/1)-Z4-C031-ST | 2d | 2026-08-18 | 2026-08-19 | RHD4CZ4C031ST2101, RHD4CZ5L08ST3502 |
| RHD4CZ4C031ST1208 |  | Bedding works for GRP Pipe Line 1200 mm - (RD-C-3/1)-Z4-C031-ST | 2d | 2026-08-20 | 2026-08-22 | RHD4CZ4C031ST1108 |
| RHD4CZ4C031ST1308 |  | Installing for GRP Pipe Line 1200 mm - (RD-C-3/1)-Z4-C031-ST | 2d | 2026-08-23 | 2026-08-24 | RHD4CZ4C031ST1208 |
| RHD4CZ4C031ST1408 |  | Primary Test for GRP Pipe Line 1200 mm - (RD-C-3/1)-Z4-C031-ST | 2d | 2026-08-25 | 2026-08-26 | RHD4CZ4C031ST1308 |
| RHD4CZ4C031ST1508 |  | Backfilling and warning tape works for GRP Pipe Line 1200 mm - (RD-C-3/1)-Z4-C031-ST | 2d | 2026-08-27 | 2026-08-29 | RHD4CZ4C031ST2501, RHD4CZ5L07ST2500, RHD4CZ4C031ST1408 |
|  | 2415 | **RHD4-02-002-C031-(ST)-GRP Pipes - 700 mm diameter** |  | 2026-08-20 | 2026-08-31 |  |
| RHD4CZ4C031ST1103 |  | Excavation works for GRP Pipe Line 700 mm - (RD-C-3/1)-Z4-C031-ST | 2d | 2026-08-20 | 2026-08-22 | RHD4CZ4C031ST1108 |
| RHD4CZ4C031ST1203 |  | Bedding works for GRP Pipe Line 700 mm - (RD-C-3/1)-Z4-C031-ST | 2d | 2026-08-23 | 2026-08-24 | RHD4CZ4C031ST1103 |
| RHD4CZ4C031ST1303 |  | Installing for GRP Pipe Line 700 mm - (RD-C-3/1)-Z4-C031-ST | 2d | 2026-08-25 | 2026-08-26 | RHD4CZ4C031ST1203 |
| RHD4CZ4C031ST1403 |  | Primary Test for GRP Pipe Line 700 mm - (RD-C-3/1)-Z4-C031-ST | 2d | 2026-08-27 | 2026-08-29 | RHD4CZ4C031ST1303 |
| RHD4CZ4C031ST1503 |  | Backfilling and warning tape works for GRP Pipe Line 700 mm - (RD-C-3/1)-Z4-C031-ST | 2d | 2026-08-30 | 2026-08-31 | RHD4CZ4C031ST1508, RHD4CZ4C031ST1403 |
|  | 2414 | **RHD4-02-002-C031-(ST)-GRP Pipes - 600 mm diameter** |  | 2026-09-01 | 2026-09-12 |  |
| RHD4CZ4C031ST1102 |  | Excavation works for GRP Pipe Line 600 mm - (RD-C-3/1)-Z4-C031-ST | 2d | 2026-09-01 | 2026-09-02 | RHD4CZ4C031ST1503, RHD4CZ4C031ST1103 |
| RHD4CZ4C031ST1202 |  | Bedding works for GRP Pipe Line 600 mm - (RD-C-3/1)-Z4-C031-ST | 2d | 2026-09-03 | 2026-09-05 | RHD4CZ4C031ST1102 |
| RHD4CZ4C031ST1302 |  | Installing for GRP Pipe Line 600 mm - (RD-C-3/1)-Z4-C031-ST | 2d | 2026-09-06 | 2026-09-07 | RHD4CZ4C031ST1202 |
| RHD4CZ4C031ST1402 |  | Primary Test for GRP Pipe Line 600 mm - (RD-C-3/1)-Z4-C031-ST | 2d | 2026-09-08 | 2026-09-09 | RHD4CZ4C031ST1302 |
| RHD4CZ4C031ST1502 |  | Backfilling and warning tape works for GRP Pipe Line 600 mm - (RD-C-3/1)-Z4-C031-ST | 2d | 2026-09-10 | 2026-09-12 | RHD4CZ4C031ST1503, RHD4CZ4C031ST1402 |
|  | 2413 | **RHD4-02-002-C031-(ST)-GRP Pipes - 500 mm diameter** |  | 2026-09-13 | 2026-09-24 |  |
| RHD4CZ4C031ST1101 |  | Excavation works for GRP Pipe Line 500 mm - (RD-C-3/1)-Z4-C031-ST | 2d | 2026-09-13 | 2026-09-14 | RHD4CZ4C031ST1502, RHD4CZ4C031ST1102 |
| RHD4CZ4C031ST1201 |  | Bedding works for GRP Pipe Line 500 mm - (RD-C-3/1)-Z4-C031-ST | 2d | 2026-09-15 | 2026-09-16 | RHD4CZ4C031ST1101 |
| RHD4CZ4C031ST1301 |  | Installing for GRP Pipe Line 500 mm - (RD-C-3/1)-Z4-C031-ST | 2d | 2026-09-17 | 2026-09-19 | RHD4CZ4C031ST1201 |
| RHD4CZ4C031ST1401 |  | Primary Test for GRP Pipe Line 500 mm - (RD-C-3/1)-Z4-C031-ST | 2d | 2026-09-20 | 2026-09-21 | RHD4CZ4C031ST1301 |
| RHD4CZ4C031ST1501 |  | Backfilling and warning tape works for GRP Pipe Line 500 mm - (RD-C-3/1)-Z4-C031-ST | 2d | 2026-09-22 | 2026-09-24 | RHD4CZ4C031ST1502, RHD4CZ4C031ST1401 |
|  | 2806 | **RHD4-02-002-C031-(ST)-MH Works - 1200 mm diameter** |  | 2026-09-26 | 2026-11-04 |  |
| RHD4CZ4C031ST3100 |  | Excavation and PC Blinding works for MH 1200 mm - (RD-C-3/1)-Z4-C031-ST | 7d | 2026-09-26 | 2026-10-03 | RHD4ENSDZ4APPST110, RHD4ENMSST2000, RHD4CZ4C031ST1501, RHD4ENMSST2010, RHD4CZ6C062ST3502, RHD4ENMSEW2000, RHD4ENMSEW2010, RHD4ENSDZ5APPEW100 SS, RHD4ENSDZ7APPRD220, RHD4ENSDZ7APPEW100 SS, RHD4CZ7L015RW3000, RHD4ENSDZ5APPRD220, RHD4CZ5L08RD1100, RHD4CZ4C031ST3302 |
| RHD4CZ4C031ST3200 |  | Installation of Base for MH 1200 mm - (RD-C-3/1)-Z4-C031-ST | 7d | 2026-10-04 | 2026-10-11 | RHD4CZ4C031ST3100, RHD4PRSHLSTAGST1603 |
| RHD4CZ4C031ST3300 |  | MH Ring and C.Slab works and Backfilling works for MH 1200 mm - (RD-C-3/1)-Z4-C031-ST | 7d | 2026-10-12 | 2026-10-19 | RHD4CZ4C031ST3200, RHD4PRSHLDOSST1603, RHD4CZ5L07ST3500 |
| RHD4CZ4C031ST3400 |  | Steel Cover for MH 1200 mm - (RD-C-3/1)-Z4-C031-ST | 7d | 2026-10-20 | 2026-10-27 | RHD4CZ4C031ST3300 |
| RHD4CZ4C031ST3500 |  | Finishing, Benching, Testing works for MH 1200 mm - (RD-C-3/1)-Z4-C031-ST | 7d | 2026-10-28 | 2026-11-04 | RHD4CZ4C031ST3400 |
|  | 2807 | **RHD4-02-002-C031-(ST)-MH Works - 1500 mm diameter** |  | 2026-10-20 | 2026-11-28 |  |
| RHD4CZ4C031ST3101 |  | Excavation and PC Blinding works for MH 1500 mm - (RD-C-3/1)-Z4-C031-ST | 2d | 2026-10-20 | 2026-10-21 | RHD4CZ4C031ST3300, RHD4ENSDZ4APPST110, RHD4ENMSST2000 |
| RHD4CZ4C031ST3201 |  | Installation of Base for MH 1500 mm - (RD-C-3/1)-Z4-C031-ST | 2d | 2026-10-22 | 2026-10-24 | RHD4CZ4C031ST3101, RHD4PRSHLSTAGST1603 |
| RHD4CZ4C031ST3301 |  | MH Ring and C.Slab works and Backfilling works for MH 1500 mm - (RD-C-3/1)-Z4-C031-ST | 2d | 2026-10-25 | 2026-10-26 | RHD4CZ4C031ST3201, RHD4PRSHLDOSST1603 |
| RHD4CZ4C031ST3401 |  | Steel Cover for MH 1500 mm - (RD-C-3/1)-Z4-C031-ST | 2d | 2026-11-24 | 2026-11-25 | RHD4CZ4C031ST3301, RHD4CZ4C031ST3400 SS, RHD4CZ4C031ST1500, RHD4PRSHLDOSST1703, RHD4PRSHLSTAGST1703 SS |
| RHD4CZ4C031ST3501 |  | Finishing, Benching, Testing works for MH 1500 mm - (RD-C-3/1)-Z4-C031-ST | 2d | 2026-11-26 | 2026-11-28 | RHD4CZ4C031ST3401, RHD4CZ4C031ST3500 SS, RHD4CZ4C031ST2500 |
|  | 2795 | **RHD4-02-002-C031-(ST)-GRP Pipes - 900 mm diameter** |  | 2026-10-27 | 2026-11-07 |  |

| ID | WBS | Task | Duration | Start | Finish | Predecessors |
| --- | --- | --- | --- | --- | --- | --- |
| RHD4CZ4C031ST1105 |  | Excavation works for GRP Pipe Line 900 mm - (RD-C-3/1)-Z4-C031-ST | 2d | 2026-10-27 | 2026-10-28 | RHD4CZ4C031ST3300, RHD4CZ4C031ST3301, RHD4ENSDZ4APPST110, RHD4CZ5L07ST8500, RHD4CZ5C061ST7500, RHD4CZ4C031ST1501 |
| RHD4CZ4C031ST1205 |  | Bedding works for GRP Pipe Line 900 mm - (RD-C-3/1)-Z4-C031-ST | 2d | 2026-10-29 | 2026-10-31 | RHD4CZ4C031ST1105 |
| RHD4CZ4C031ST1305 |  | Installing for GRP Pipe Line 900 mm - (RD-C-3/1)-Z4-C031-ST | 2d | 2026-11-01 | 2026-11-02 | RHD4CZ4C031ST1205, RHD4PRSHLSTAGST1003, RHD4PRSHLDOSST1603, RHD4PRSHLPOST1000, RHD4PRSHLDOSST1003 |
| RHD4CZ4C031ST1405 |  | Primary Test for GRP Pipe Line 900 mm - (RD-C-3/1)-Z4-C031-ST | 2d | 2026-11-03 | 2026-11-04 | RHD4CZ4C031ST1305 |
| RHD4CZ4C031ST1505 |  | Backfilling and warning tape works for GRP Pipe Line 900 mm - (RD-C-3/1)-Z4-C031-ST | 2d | 2026-11-05 | 2026-11-07 | RHD4CZ4C031ST1405 |
|  | 2790 | **RHD4-02-002-C031-(ST)-GRP Pipes - 400 mm diameter** |  | 2026-10-29 | 2026-11-23 |  |
| RHD4CZ4C031ST1100 |  | Excavation works for GRP Pipe Line 400 mm - (RD-C-3/1)-Z4-C031-ST | 4d | 2026-10-29 | 2026-11-02 | RHD4CZ4C031ST3300, RHD4CZ4C031ST3301, RHD4CZ4C031ST1105, RHD4ENSDZ4APPST110 |
| RHD4CZ4C031ST1200 |  | Bedding works for GRP Pipe Line 400 mm - (RD-C-3/1)-Z4-C031-ST | 3d | 2026-11-03 | 2026-11-05 | RHD4CZ4C031ST1100, RHD4CZ4C031ST1205 |
| RHD4CZ4C031ST1300 |  | Installing for GRP Pipe Line 400 mm - (RD-C-3/1)-Z4-C031-ST | 5d | 2026-11-07 | 2026-11-11 | RHD4CZ4C031ST1200, RHD4CZ4C031ST1305, RHD4PRSHLSTAGST1003, RHD4PRSHLDOSST1603, RHD4PRSHLPOST1000, RHD4PRSHLDOSST1003 |
| RHD4CZ4C031ST1400 |  | Primary Test for GRP Pipe Line 400 mm - (RD-C-3/1)-Z4-C031-ST | 3d | 2026-11-12 | 2026-11-15 | RHD4CZ4C031ST1300, RHD4CZ4C031ST1405 |
| RHD4CZ4C031ST1500 |  | Backfilling and warning tape works for GRP Pipe Line 400 mm - (RD-C-3/1)-Z4-C031-ST | 7d | 2026-11-16 | 2026-11-23 | RHD4CZ4C031ST1400, RHD4CZ4C031ST1505 |
|  | 2804 | **RHD4-02-002-C031-(ST)-UPVC Pipes - 300 mm diameter** |  | 2026-10-27 | 2026-11-23 |  |
| RHD4CZ4C031ST2100 |  | Excavation works for UPVC Pipe Line 300 mm - (RD-C-3/1)-Z4-C031-ST | 4d | 2026-10-27 | 2026-10-31 | RHD4CZ4C031ST3300, RHD4CZ4C031ST3301, RHD4ENSDZ4APPST110 |
| RHD4CZ4C031ST2200 |  | Bedding works for UPVC Pipe Line 300 mm - (RD-C-3/1)-Z4-C031-ST | 3d | 2026-11-01 | 2026-11-03 | RHD4CZ4C031ST2100 |
| RHD4CZ4C031ST2300 |  | Installing for UPVC Pipe Line 300 mm - (RD-C-3/1)-Z4-C031-ST | 4d | 2026-11-11 | 2026-11-15 | RHD4CZ4C031ST2200, RHD4CZ4C031ST7300, RHD4PRSHLDOSST1103, RHD4PRSHLSTAGST1103 |
| RHD4CZ4C031ST2400 |  | Primary Test for UPVC Pipe Line 300 mm - (RD-C-3/1)-Z4-C031-ST | 2d | 2026-11-16 | 2026-11-17 | RHD4CZ4C031ST2300 |
| RHD4CZ4C031ST2500 |  | Backfilling and warning tape works for UPVC Pipe Line 300 mm - (RD-C-3/1)-Z4-C031-ST | 5d | 2026-11-18 | 2026-11-23 | RHD4CZ4C031ST2400, RHD4CZ4C031ST6100 |
|  | 2812 | **RHD4-02-002-C031-(ST)-Concrete Encasement** |  | 2026-11-11 | 2026-11-15 |  |
| RHD4CZ4C031ST6100 |  | Pipe Encasement for Storm Pipelines - (RD-C-3/1)-Z4-C031-ST | 4d | 2026-11-11 | 2026-11-15 | RHD4CZ4C031ST2300 SS, RHD4CZ4C031ST2300 FF, RHD4CZ4C031ST2200 |
|  | 2813 | **RHD4-02-002-Z4-C031-Catch Basin - ST** |  | 2026-10-27 | 2026-11-24 |  |
|  | 2437 | **RHD4-02-002-C031-(ST)-Double Catch Basin Works** |  | 2026-11-03 | 2026-11-14 |  |
| RHD4CZ4C031ST8100 |  | Excavation works for Double Catch Basin - (RD-C-3/1)-Z4-C031-ST | 2d | 2026-11-03 | 2026-11-04 | RHD4CZ4C031ST1100 |
| RHD4CZ4C031ST8200 |  | PC Blinding, Installation and Pipe connection for Double Catch Basin - (RD-C-3/1)-Z4-C031-ST | 2d | 2026-11-05 | 2026-11-07 | RHD4CZ4C031ST8100 |
| RHD4CZ4C031ST8300 |  | Rings & C.Slab & Final Backfillfor Double Catch Basin - (RD-C-3/1)-Z4-C031-ST | 2d | 2026-11-08 | 2026-11-09 | RHD4CZ4C031ST8200 |
| RHD4CZ4C031ST8400 |  | Steel Cover for Double Catch Basin - (RD-C-3/1)-Z4-C031-ST | 2d | 2026-11-10 | 2026-11-11 | RHD4CZ4C031ST8300 |
| RHD4CZ4C031ST8500 |  | Finishing and Insulation works for Double Catch Basin - (RD-C-3/1)-Z4-C031-ST | 2d | 2026-11-12 | 2026-11-14 | RHD4CZ4C031ST8400 |
|  | 2814 | **RHD4-02-002-C031-(ST)-Single Catch Basin Works** |  | 2026-10-27 | 2026-11-24 |  |
| RHD4CZ4C031ST7100 |  | Excavation works for Single Catch Basin - (RD-C-3/1)-Z4-C031-ST | 4d | 2026-10-27 | 2026-10-31 | RHD4CZ4C031ST3300, RHD4CZ4C031ST3301, RHD4ENSDZ4APPST110 |
| RHD4CZ4C031ST7200 |  | PC Blinding, Installation and Pipe connection for Single Catch Basin - (RD-C-3/1)-Z4-C031-ST | 4d | 2026-11-01 | 2026-11-04 | RHD4CZ4C031ST7100 |
| RHD4CZ4C031ST7300 |  | Rings & C.Slab & Final Backfill for Single Catch Basin - (RD-C-3/1)-Z4-C031-ST | 5d | 2026-11-05 | 2026-11-10 | RHD4CZ4C031ST7200, RHD4PRSHLDOSST1303, RHD4PRSHLSTAGST1303 |
| RHD4CZ4C031ST7400 |  | Steel Cover for Single Catch Basin - (RD-C-3/1)-Z4-C031-ST | 4d | 2026-11-11 | 2026-11-15 | RHD4CZ4C031ST7300, RHD4PRSHLDOSST1703 |
| RHD4CZ4C031ST7500 |  | Finishing and Insulation works for Single Catch Basin - (RD-C-3/1)-Z4-C031-ST | 8d | 2026-11-16 | 2026-11-24 | RHD4CZ4C031ST7400 |
|  | 2875 | **RHD4-02-002-Z4-C031-Potable Network - PT** |  | 2026-11-24 | 2027-01-02 |  |
|  | 2879 | **RHD4-02-002-C031-(PT)-HDPE Pipes - 400 mm diameter** |  | 2026-11-24 | 2026-12-05 |  |
| RHD4CZ4C031PT1103 |  | Excavation works for HDPE Pipline 400 mm - (RD-C-3/1)-Z4-C031-PT | 2d | 2026-11-24 | 2026-11-25 | RHD4ENSDZ4APPPT130, RHD4ENMSPT2000, RHD4CZ4C031ST2500, RHD4CZ4C031ST1500 |
| RHD4CZ4C031PT1203 |  | Bedding works for HDPE Pipline 400 mm - (RD-C-3/1)-Z4-C031-PT | 2d | 2026-11-26 | 2026-11-28 | RHD4CZ4C031PT1103 |
| RHD4CZ4C031PT1303 |  | Installing for HDPE Pipline 400 mm - (RD-C-3/1)-Z4-C031-PT | 2d | 2026-11-29 | 2026-11-30 | RHD4CZ4C031PT1203, RHD4PRSHLDOSPT1000, RHD4PRSHLSTAGPT1000 |
| RHD4CZ4C031PT1403 |  | Primary Test for HDPE Pipline 400 mm - (RD-C-3/1)-Z4-C031-PT | 2d | 2026-12-01 | 2026-12-02 | RHD4CZ4C031PT1303 |
| RHD4CZ4C031PT1503 |  | Backfilling and warning tape works for HDPE Pipline 400 mm - (RD-C-3/1)-Z4-C031-PT | 2d | 2026-12-03 | 2026-12-05 | RHD4CZ4C031PT1403 |
|  | 1751 | **RHD4-02-002-C031-(PT)-Air Valve Chambers** |  | 2026-11-26 | 2026-12-05 |  |
| RHD4CZ4C031PT2102 |  | Excavation and Bedding for Air Valve Chambers for Potable Water Network - (RD-C-3/1)-Z4-C031-PT | 2d | 2026-11-26 | 2026-11-28 | RHD4CZ4C031PT1103 |
| RHD4CZ4C031PT2202 |  | PC works for Air Valve Chambers for Potable Water Network - (RD-C-3/1)-Z4-C031-PT | 2d | 2026-11-29 | 2026-11-30 | RHD4CZ4C031PT2102 |
| RHD4CZ4C031PT2302 |  | Installation for Air Valve Chambers for Potable Water Network - (RD-C-3/1)-Z4-C031-PT | 2d | 2026-12-01 | 2026-12-02 | RHD4CZ4C031PT2202 |
| RHD4CZ4C031PT2402 |  | Backfilling works for Air Valve Chambers for Potable Water Network - (RD-C-3/1)-Z4-C031-PT | 2d | 2026-12-03 | 2026-12-05 | RHD4CZ4C031PT2302 |
|  | 1752 | **RHD4-02-002-C031-(PT)-Air Valves** |  | 2026-12-03 | 2026-12-07 |  |
| RHD4CZ4C031PT3103 |  | Installation for Air Valves for Potable Water Network - (RD-C-3/1)-Z4-C031-PT | 2d | 2026-12-03 | 2026-12-05 | RHD4CZ4C031PT2302 |
| RHD4CZ4C031PT3203 |  | Stem and Service box for Air Valves for Potable Water Network - (RD-C-3/1)-Z4-C031-PT | 2d | 2026-12-06 | 2026-12-07 | RHD4CZ4C031PT3103, RHD4CZ4C031PT2402 |
|  | 2883 | **RHD4-02-002-C031-(PT)-Butterfly Valves** |  | 2026-12-06 | 2027-01-02 |  |
| RHD4CZ4C031PT3101 |  | Installation for Butterfly Valves for Potable Water Network - (RD-C-3/1)-Z4-C031-PT | 2d | 2026-12-06 | 2026-12-07 | RHD4CZ4C031PT2300, RHD4PRSHLDOSPT1200, RHD4PRSHLSTAGPT1200 |
| RHD4CZ4C031PT3201 |  | Stem and Service box for Butterfly Valves for Potable Water Network - (RD-C-3/1)-Z4-C031-PT | 2d | 2026-12-31 | 2027-01-02 | RHD4CZ4C031PT3101, RHD4CZ4C031PT2400, RHD4PRSHLDOSPT1300, RHD4PRSHLSTAGPT1300, RHD4CZ4A013PT3203, RHD4CZ4A013PT3202, RHD4CZ4A013PT3201 |
|  | 2888 | **RHD4-02-002-C031-(PT)-Fire Hydrant** |  | 2026-12-06 | 2026-12-16 |  |
| RHD4CZ4C031PT4100 |  | Excavation and Bedding and Pipe Installation for Fire Hydrant - (RD-C-3/1)-Z4-C031-PT | 2d | 2026-12-06 | 2026-12-07 | RHD4CZ4C031PT1503, RHD4ENSDZ4APPPT130 |
| RHD4CZ4C031PT4200 |  | Valve Installation for Fire Hydrant - (RD-C-3/1)-Z4-C031-PT | 2d | 2026-12-08 | 2026-12-09 | RHD4CZ4C031PT4100 |
| RHD4CZ4C031PT4300 |  | Stem for Fire Hydrant - (RD-C-3/1)-Z4-C031-PT | 2d | 2026-12-10 | 2026-12-12 | RHD4CZ4C031PT4200 |
| RHD4CZ4C031PT4400 |  | Fire Installation for Fire Hydrant - (RD-C-3/1)-Z4-C031-PT | 2d | 2026-12-13 | 2026-12-14 | RHD4CZ4C031PT4300, RHD4PRSHLDOSPT1500, RHD4PRSHLSTAGPT1500 |
| RHD4CZ4C031PT4500 |  | Protection Barriers for Fire Hydrant - (RD-C-3/1)-Z4-C031-PT | 2d | 2026-12-15 | 2026-12-16 | RHD4CZ4C031PT4400 |
|  | 2889 | **RHD4-02-002-C031-(PT)-Concrete Encasement** |  |  |  |  |
|  | 2882 | **RHD4-02-002-C031-(PT)-Butterfly Valve Chamber** |  | 2026-11-29 | 2026-12-07 |  |
| RHD4CZ4C031PT2100 |  | Excavation and Bedding for Butterfly Valve Chamber for Potable Water Network - (RD-C-3/1)-Z4-C031-PT | 2d | 2026-11-29 | 2026-11-30 | RHD4ENSDZ4APPPT130, RHD4CZ4C031PT2102 |
| RHD4CZ4C031PT2200 |  | PC works for Butterfly Valve Chamber for Potable Water Network - (RD-C-3/1)-Z4-C031-PT | 2d | 2026-12-01 | 2026-12-02 | RHD4CZ4C031PT2100 |
| RHD4CZ4C031PT2300 |  | Installation for Butterfly Valve Chamber for Potable Water Network - (RD-C-3/1)-Z4-C031-PT | 2d | 2026-12-03 | 2026-12-05 | RHD4CZ4C031PT2200, RHD4PRSHLDOSPT1100, RHD4PRSHLDOSPT1400, RHD4PRSHLSTAGPT1100, RHD4PRSHLSTAGPT1400 |
| RHD4CZ4C031PT2400 |  | Backfilling works for Butterfly Valve Chamber for Potable Water Network - (RD-C-3/1)-Z4-C031-PT | 2d | 2026-12-06 | 2026-12-07 | RHD4CZ4C031PT2300 |
|  | 2924 | **RHD4-02-002-Z4-C031-Medium Voltage Network - MV** |  | 2026-11-16 | 2026-11-29 |  |
|  | 2925 | **RHD4-02-002-C031-(MV)-Medium Voltage cable trench** |  | 2026-11-16 | 2026-11-26 |  |
| RHD4CZ4C031MV1100 |  | Excavation for Medium Voltage Trench - (RD-C-3/1)-Z4-C031-MV | 8d | 2026-11-16 | 2026-11-24 | RHD4ENSDZ4APPMV150, RHD4CZ4C031ST6100, RHD4CZ4C031RD3100 |
| RHD4CZ4C031MV1200 |  | Trench Backfilling for Medium Voltage Network - (RD-C-3/1)-Z4-C031-MV | 2d | 2026-11-25 | 2026-11-26 | RHD4CZ4C031MV1100 |
|  | 2926 | **RHD4-02-002-C031-(MV)-Medium Voltage duct banks** |  | 2026-11-16 | 2026-11-25 |  |
| RHD4CZ4C031MV2100 |  | Excavation of Duct Banks for Medium Voltage Network - (RD-C-3/1)-Z4-C031-MV | 2d | 2026-11-16 | 2026-11-17 | RHD4ENSDZ4APPMV150, RHD4CZ4C031MV1100 SS |
| RHD4CZ4C031MV2200 |  | Installation of Duct Banks for Medium Voltage Network - (RD-C-3/1)-Z4-C031-MV | 3d | 2026-11-18 | 2026-11-21 | RHD4CZ4C031MV2100, RHD4PRSHLDOSMV1000, RHD4PRSHLSTAGMV1000 |
| RHD4CZ4C031MV2300 |  | Pouring of Duct Banks for Medium Voltage Network - (RD-C-3/1)-Z4-C031-MV | 2d | 2026-11-22 | 2026-11-23 | RHD4CZ4C031MV2200 |

| ID | WBS | Task | Duration | Start | Finish | Predecessors |
| --- | --- | --- | --- | --- | --- | --- |
| RHD4CZ4C031MV2400 |  | Backfilling of Duct Banks for Medium Voltage Network - (RD-C-3/1)-Z4-C031-MV | 2d | 2026-11-24 | 2026-11-25 | RHD4CZ4C031MV2300 |
|  | 2927 | **RHD4-02-002-C031-(MV)-Medium Voltage cables 3Cx 500 mm²** |  | 2026-11-25 | 2026-11-29 |  |
| RHD4CZ4C031MV3100 |  | Installation of Medium Voltage Cables 3Cx 500 mm² - (RD-C-3/1)-Z4-C031-MV | 4d | 2026-11-25 | 2026-11-29 | RHD4CZ4C031MV1100, RHD4PRSHLDOSMV1100, RHD4ENMSMV2000, RHD4ENMSMV2010, RHD4PRSHLSTAGMV1100, RHD4CZ4C031ST1501 |
| RHD4CZ4C031MV3300 |  | Testing of Medium Voltage Cables 3Cx 500 mm² - (RD-C-3/1)-Z4-C031-MV | 2d | 2026-11-28 | 2026-11-29 | RHD4CZ4C031MV1200 |
|  | 1982 | **RHD4-02-002-C031-(MV)-Medium Voltage cables 3Cx 50 mm²** |  |  |  |  |
|  | 2931 | **RHD4-02-002-Z4-C031-Low Voltage Network - LV** |  | 2026-12-06 | 2026-12-14 |  |
|  | 2932 | **RHD4-02-002-C031-(LV)-Low Voltage duct banks** |  |  |  |  |
|  | 2934 | **RHD4-02-002-C031-(LV)-Low Voltage cables** |  | 2026-12-06 | 2026-12-14 |  |
| RHD4CZ4C031LV3100 |  | Excavation for Low Voltage Cables for Low Voltage Network - (RD-C-3/1)-Z4-C031-LV | 2d | 2026-12-06 | 2026-12-07 | RHD4CZ4C031PT1503, RHD4ENSDZ4APPLV160, RHD4CZ4C031MV1100 |
| RHD4CZ4C031LV3200 |  | Cable Laying of Low Voltage Cables for Low Voltage Network - (RD-C-3/1)-Z4-C031-LV | 2d | 2026-12-08 | 2026-12-09 | RHD4CZ4C031LV3100, RHD4PRSHLDOSLV1100, RHD4ENMSLV2000, RHD4ENMSLV2010, RHD4PRSHLSTAGLV1100 |
| RHD4CZ4C031LV3300 |  | Warning tape and Backfill for Low Voltage Cables for Low Voltage Network - (RD-C-3/1)-Z4-C031-LV | 2d | 2026-12-10 | 2026-12-12 | RHD4CZ4C031LV3200 |
| RHD4CZ4C031LV3400 |  | Testing of Low Voltage Cables for Low Voltage Network - (RD-C-3/1)-Z4-C031-LV | 2d | 2026-12-13 | 2026-12-14 | RHD4CZ4C031LV3300 |
|  | 2937 | **RHD4-02-002-Z4-C031-Street Lighting Network - SL** |  | 2026-11-18 | 2026-12-21 |  |
|  | 2938 | **RHD4-02-002-C031-(SL)-Street Lighting duct banks** |  | 2026-11-18 | 2026-11-28 |  |
| RHD4CZ4C031SL2100 |  | Excavation of Duct Banks for Street Lighting Network - (RD-C-3/1)-Z4-C031-SL | 2d | 2026-11-18 | 2026-11-19 | RHD4ENSDZ4APPSL170, RHD4CZ4C031MV2100 |
| RHD4CZ4C031SL2200 |  | Installation of Duct Banks for Street Lighting Network - (RD-C-3/1)-Z4-C031-SL | 3d | 2026-11-21 | 2026-11-23 | RHD4CZ4C031SL2100, RHD4PRSHLDOSSL1000, RHD4PRSHLSTAGSL1000 |
| RHD4CZ4C031SL2300 |  | Pouring of Duct Banks for Street Lighting Network - (RD-C-3/1)-Z4-C031-SL | 2d | 2026-11-24 | 2026-11-25 | RHD4CZ4C031SL2200 |
| RHD4CZ4C031SL2400 |  | Backfilling of Duct Banks for Street Lighting Network - (RD-C-3/1)-Z4-C031-SL | 2d | 2026-11-26 | 2026-11-28 | RHD4CZ4C031SL2300 |
|  | 2939 | **RHD4-02-002-C031-(SL)-Street Lighting Drawpit** |  | 2026-12-01 | 2026-12-05 |  |
| RHD4CZ4C031SL5100 |  | Excavation of Drawpit size 600x600x900mm for Street Lighting Network - (RD-C-3/1)-Z4-C031-SL | 2d | 2026-12-01 | 2026-12-02 | RHD4CZ4C031SL2300, RHD4ENSDZ4APPSL170, RHD4CZ4C031SL1100 |
| RHD4CZ4C031SL5200 |  | Installation of Drawpit size 600x600x900mm for Street Lighting Network - (RD-C-3/1)-Z4-C031-SL | 2d | 2026-12-03 | 2026-12-05 | RHD4CZ4C031SL5100, RHD4PRSHLDOSSL1400, RHD4PRSHLSTAGSL1400, RHD4CZ4C031MV3100 |
|  | 2940 | **RHD4-02-002-C031-(SL)-Street Lighting cables** |  | 2026-11-30 | 2026-12-16 |  |
| RHD4CZ4C031SL3100 |  | Excavation for Street Lighting Cables for Street Lighting Network - (RD-C-3/1)-Z4-C031-SL | 2d | 2026-11-30 | 2026-12-01 | RHD4ENSDZ4APPSL170, RHD4CZ4C031MV3300 |
| RHD4CZ4C031SL3200 |  | Cable Laying of Street Lighting Cables for Street Lighting Network - (RD-C-3/1)-Z4-C031-SL | 2d | 2026-12-02 | 2026-12-03 | RHD4CZ4C031SL3100, RHD4PRSHLDOSSL1100, RHD4ENMSSL2000, RHD4ENMSSL2010, RHD4PRSHLSTAGSL1100 |
| RHD4CZ4C031SL3300 |  | Warning tape and Backfill for Street Lighting Cables for Street Lighting Network - (RD-C-3/1)-Z4-C031-SL | 2d | 2026-12-05 | 2026-12-06 | RHD4CZ4C031SL3200 |
| RHD4CZ4C031SL3400 |  | Testing of Street Lighting Cables for Street Lighting Network - (RD-C-3/1)-Z4-C031-SL | 2d | 2026-12-15 | 2026-12-16 | RHD4CZ4C031SL3300, RHD4CZ4C031LV3400 |
|  | 2941 | **RHD4-02-002-C031-(SL)-Street Lighting Poles** |  | 2026-11-29 | 2026-12-21 |  |
| RHD4CZ4C031SL1100 |  | Excavation for RC Base for Lighting Poles for Street Lighting Network - (RD-C-3/1)-Z4-C031-SL | 2d | 2026-11-29 | 2026-11-30 | RHD4CZ4C031SL2400, RHD4CZ4C031MV1200, RHD4ENSDZ4APPSL170 |
| RHD4CZ4C031SL1200 |  | Installation for RC Base for Lighting Poles for Street Lighting Network - (RD-C-3/1)-Z4-C031-SL | 2d | 2026-12-01 | 2026-12-02 | RHD4CZ4C031SL1100 |
| RHD4CZ4C031SL1300 |  | Backfill for RC Base for Lighting Poles for Street Lighting Network - (RD-C-3/1)-Z4-C031-SL | 2d | 2026-12-03 | 2026-12-05 | RHD4CZ4C031SL1200 |
| RHD4CZ4C031SL1400 |  | Installation for Lighting Poles for Street Lighting Network - (RD-C-3/1)-Z4-C031-SL | 2d | 2026-12-17 | 2026-12-19 | RHD4CZ4C031SL1300, RHD4CZ4C031SL3400, RHD4PRSHLDOSSL1200, RHD4ENMSSL2000, RHD4ENMSSL2010, RHD4PRSHLSTAGSL1200 |
| RHD4CZ4C031SL1500 |  | Luminaire Installation for Lighting Poles for Street Lighting Network - (RD-C-3/1)-Z4-C031-SL | 2d | 2026-12-20 | 2026-12-21 | RHD4CZ4C031SL1400, RHD4PRSHLDOSSL1300, RHD4PRSHLSTAGSL1300 |
|  | 2942 | **RHD4-02-002-C031-(SL)-Street Lighting Feeder Pillars** |  |  |  |  |
|  | 2943 | **RHD4-02-002-C031-(SL)-Street Lighting Earthing System** |  | 2026-12-20 | 2026-12-21 |  |
| RHD4CZ4C031SL6100 |  | Installation of Earthing for Lighting Poles and Fedder Pillers for Street Lighting Network - (RD-C-3/1)-Z4-C031-SL | 2d | 2026-12-20 | 2026-12-21 | RHD4ENMSER2000, RHD4ENMSER2010, RHD4CZ4C031SL1400 |
|  | 2949 | **RHD4-02-002-Z4-C031-Telecommunications Network - TC** |  | 2026-12-01 | 2026-12-09 |  |
|  | 2950 | **RHD4-02-002-C031-(TC)-Telecommunications Ducts** |  | 2026-12-01 | 2026-12-09 |  |
| RHD4CZ4C031TC2100 |  | Excavation of HDPE Ducts for Telecom Network - (RD-C-3/1)-Z4-C031-TC | 2d | 2026-12-01 | 2026-12-02 | RHD4ENSDZ4APPTC190, RHD4CZ4C031SL1100 |
| RHD4CZ4C031TC2200 |  | Installation of HDPE Ducts for Telecom Network - (RD-C-3/1)-Z4-C031-TC | 2d | 2026-12-03 | 2026-12-05 | RHD4CZ4C031TC2100, RHD4PRSHLDOSTC1000, RHD4PRSHLSTAGTC1000 |
| RHD4CZ4C031TC2400 |  | Backfilling of HDPE Ducts for Telecom Network - (RD-C-3/1)-Z4-C031-TC | 2d | 2026-12-08 | 2026-12-09 | RHD4CZ4C031TC2200, RHD4CZ4C031TC5200 |
|  | 2951 | **RHD4-02-002-C031-(TC)-Telecommunications Manholes** |  | 2026-12-03 | 2026-12-07 |  |
| RHD4CZ4C031TC5100 |  | Excavation for Manholes for Telecom Network - (RD-C-3/1)-Z4-C031-TC | 2d | 2026-12-03 | 2026-12-05 | RHD4CZ4C031TC2100, RHD4ENSDZ4APPTC190 |
| RHD4CZ4C031TC5200 |  | Installation of Manholes for Telecom Network - (RD-C-3/1)-Z4-C031-TC | 2d | 2026-12-06 | 2026-12-07 | RHD4CZ4C031TC5100, RHD4CZ4C031TC2200 SS, RHD4PRSHLDOSTC1200, RHD4PRSHLSTAGTC1200 |
|  | 2952 | **RHD4-02-002-C031-(TC)-Telecomminications Road Crossings** |  |  |  |  |
|  | 2953 | **RHD4-02-002-Z4-C031-Information and Communication Technologies - ICT** |  | 2026-08-16 | 2026-12-16 |  |
|  | 2954 | **RHD4-02-002-C031-(ICT)-Information and Communication Technologies Ducts** |  | 2026-12-06 | 2026-12-16 |  |
| RHD4CZ4C031ICT2100 |  | Excavation of HDPE Ducts for ICT Network - (RD-C-3/1)-Z4-C031-ICT | 3d | 2026-12-06 | 2026-12-08 | RHD4CZ4C031ICT3400, RHD4ENSDZ4APPICT200, RHD4CZ4C031TC5100 |
| RHD4CZ4C031ICT2200 |  | Installation of HDPE Ducts for ICT Network - (RD-C-3/1)-Z4-C031-ICT | 4d | 2026-12-09 | 2026-12-13 | RHD4CZ4C031ICT2100, RHD4PRSHLDOSICT1000, RHD4PRSHLSTAGICT1000 |
| RHD4CZ4C031ICT2400 |  | Backfilling of HDPE Ducts for ICT Network - (RD-C-3/1)-Z4-C031-ICT | 3d | 2026-12-14 | 2026-12-16 | RHD4CZ4C031ICT2200, RHD4CZ4C031ICT5200 |
|  | 2955 | **RHD4-02-002-C031-(ICT)-Information and Communication Technologies Manholes** |  | 2026-12-09 | 2026-12-13 |  |
| RHD4CZ4C031ICT5100 |  | Excavation for Manholes for ICT Network - (RD-C-3/1)-Z4-C031-ICT | 2d | 2026-12-09 | 2026-12-10 | RHD4CZ4C031ICT2100, RHD4ENSDZ4APPICT200 |
| RHD4CZ4C031ICT5200 |  | Installation of Manholes for ICT Network - (RD-C-3/1)-Z4-C031-ICT | 2d | 2026-12-12 | 2026-12-13 | RHD4CZ4C031ICT5100, RHD4CZ4C031ICT2200 SS, RHD4PRSHLDOSICT1200, RHD4PRSHLSTAGICT1200 |
|  | 2956 | **RHD4-02-002-C031-(ICT)-Information and Communication Technologies Road Crossings** |  | 2026-08-16 | 2026-08-24 |  |
| RHD4CZ4C031ICT3100 |  | Excavation for Road Crossings for ICT Network - (RD-C-3/1)-Z4-C031-ICT | 2d | 2026-08-16 | 2026-08-17 | RHD4ENSDZ4APPICT200, RHD4CZ4C031ST3102 |
| RHD4CZ4C031ICT3200 |  | Installation of Road Crossings for ICT Network - (RD-C-3/1)-Z4-C031-ICT | 2d | 2026-08-18 | 2026-08-19 | RHD4CZ4C031ICT3100, RHD4PRSHLDOSICT1100, RHD4PRSHLSTAGICT1100 |
| RHD4CZ4C031ICT3300 |  | Pouring of Road Crossings for ICT Network - (RD-C-3/1)-Z4-C031-ICT | 2d | 2026-08-20 | 2026-08-22 | RHD4CZ4C031ICT3200 |
| RHD4CZ4C031ICT3400 |  | Backfilling of Road Crossings for ICT Network - (RD-C-3/1)-Z4-C031-ICT | 2d | 2026-08-23 | 2026-08-24 | RHD4CZ4C031ICT3300 |
|  | 2944 | **RHD4-02-002-Z4-C031-Landscape Network - LS** |  |  |  |  |
|  | 2945 | **RHD4-02-002-C031-(LS)-Landscape Lighting cables** |  |  |  |  |
|  | 2946 | **RHD4-02-002-C031-(LS)-Landscape Feeder Pillars** |  |  |  |  |
|  | 2947 | **RHD4-02-002-C031-(LS)-Landscape Bollard Poles** |  |  |  |  |
|  | 2948 | **RHD4-02-002-C031-(LS)-Landscape Feeder Pillars Earthing** |  |  |  |  |
|  | 2957 | **RHD4-02-002-Z4-C031-Security Network - CCTV** |  | 2026-12-17 | 2027-02-20 |  |
|  | 2958 | **RHD4-02-002-C031-(CCTV)-Civil Works** |  | 2026-12-17 | 2026-12-28 |  |
| RHD4CZ4C031CCTV2100 |  | Civil Works for Security Network - (RD-C-3/1)-Z4-C031-CCTV | 10d | 2026-12-17 | 2026-12-28 | RHD4CZ4C031ICT2400, RHD4CZ4C031TC2400 |
|  | 2959 | **RHD4-02-002-C031-(CCTV)-CCTV Poles** |  | 2026-12-29 | 2027-01-09 |  |
| RHD4CZ4C031CCTV1100 |  | Excavation for RC Base for CCTV Poles for Security Network - (RD-C-3/1)-Z4-C031-CCTV | 2d | 2026-12-29 | 2026-12-30 | RHD4CZ4C031CCTV2100, RHD4ENSDZ4APPCCTV210 |
| RHD4CZ4C031CCTV1200 |  | Installation for RC Base for CCTV Poles for Security Network - (RD-C-3/1)-Z4-C031-CCTV | 2d | 2026-12-31 | 2027-01-02 | RHD4CZ4C031CCTV1100 |
| RHD4CZ4C031CCTV1300 |  | Backfill for RC Base for CCTV Poles for Security Network - (RD-C-3/1)-Z4-C031-CCTV | 2d | 2027-01-03 | 2027-01-04 | RHD4CZ4C031CCTV1200 |
| RHD4CZ4C031CCTV1400 |  | Installation for CCTV Poles for Security Network - (RD-C-3/1)-Z4-C031-CCTV | 2d | 2027-01-05 | 2027-01-06 | RHD4CZ4C031CCTV1300, RHD4PRSHLDOSCCTV1000, RHD4PRSHLSTACCTV1000 |

| ID | WBS | Task | Duration | Start | Finish | Predecessors |
| --- | --- | --- | --- | --- | --- | --- |
| RHD4CZ4C031CCTV1500 |  | Protection post Installation for CCTV Poles for Security Network - (RD-C-3/1)-Z4-C031-CCTV | 2d | 2027-01-07 | 2027-01-09 | RHD4CZ4C031CCTV1400 |
|  | 2960 | **RHD4-02-002-C031-(CCTV)-Camera** |  | 2027-02-01 | 2027-02-02 |  |
| RHD4CZ4C031CCTV3100 |  | Installation for Cameras for Security Network - (RD-C-3/1)-Z4-C031-CCTV | 2d | 2027-02-01 | 2027-02-02 | RHD4CZ4C031CCTV1400, RHD4CZ4C031CCTV4100, RHD4PRSHLDOSCCTV1100, RHD4PRSHLSTACCTV1100 |
|  | 2961 | **RHD4-02-002-C031-(CCTV)-Power and Infrastructure** |  | 2027-01-30 | 2027-02-02 |  |
| RHD4CZ4C031CCTV4100 |  | Installation of Power outlet, UPS and midspan for PTZ Camerafor Cameras for Security Network - (RD-C-3/1)-Z4-C031-CCTV | 2d | 2027-01-30 | 2027-01-31 | RHD4CZ4C031CCTV1400, RHD4PRSHLDOSCCTV1300, RHD4PRSHLSTACCTV1300, RHD4CZ4RA02CCTV2100 |
| RHD4CZ4C031CCTV4200 |  | Short Range Wireless PoP wireless Bridgefor CCTV Poles for Security Network - (RD-C-3/1)-Z4-C031-CCTV | 2d | 2027-02-01 | 2027-02-02 | RHD4CZ4C031CCTV4100 |
|  | 2963 | **RHD4-02-002-C031-(CCTV)-CCTV Panels and Components** |  | 2027-02-03 | 2027-02-20 |  |
| RHD4CZ4C031CCTV6100 |  | Installation for CCTV Panels for Security Network - (RD-C-3/1)-Z4-C031-CCTV | 15d | 2027-02-03 | 2027-02-20 | RHD4CZ4C031CCTV4200, RHD4CZ4C031CCTV3100, RHD4PRSHLDOSCCTV1200, RHD4PRSHLSTACCTV1200, RHD4PRLOLSTACCTV1001 |
|  | 2407 | **RHD4-02-002-Z4-L014** |  | 2026-08-10 | 2027-09-16 |  |
|  | 2438 | **RHD4-02-002-Z4-L014-Crossings Sewage Network - SWCr** |  |  |  |  |
|  | 2448 | **RHD4-02-002-L014-(SWCr)-MH Works - 1200 mm diameter** |  |  |  |  |
|  | 2449 | **RHD4-02-002-L014-(SWCr)-MH Works - 1200 mm diameter with Back drop** |  |  |  |  |
|  | 2444 | **RHD4-02-002-L014-(SWCr)-UPVC Pipes - 200 mm diameter** |  |  |  |  |
|  | 2442 | **RHD4-02-002-L014-(SWCr)-GRP Pipes - 600 mm diameter** |  |  |  |  |
|  | 2441 | **RHD4-02-002-L014-(SWCr)-GRP Pipes - 500 mm diameter** |  |  |  |  |
|  | 2482 | **RHD4-02-002-Z4-L014-Crossings Potable Network - PTCr** |  |  |  |  |
|  | 2484 | **RHD4-02-002-L014-(PTCr)-HDPE Pipes - 160 mm diameter** |  |  |  |  |
|  | 2483 | **RHD4-02-002-L014-(PTCr)-HDPE Pipes - 110 mm diameter** |  |  |  |  |
|  | 2488 | **RHD4-02-002-L014-(PTCr)-Gate Valves (Direct Buried)** |  |  |  |  |
|  | 2529 | **RHD4-02-002-Z4-L014-Crossings Irrigation Network - IRRC** |  |  |  |  |
|  | 2530 | **RHD4-02-002-L014-(IRRC)-HDPE Pipes - 160 mm diameter** |  |  |  |  |
|  | 2533 | **RHD4-02-002-L014-(IRRC)-HDPE Pipes - 250 mm diameter** |  |  |  |  |
|  | 2538 | **RHD4-02-002-L014-(IRRC)-Gate Valves (Direct Buried)** |  |  |  |  |
|  | 2541 | **RHD4-02-002-L014-(IRRC)-Wash out Chamber** |  |  |  |  |
|  | 2542 | **RHD4-02-002-L014-(IRRC)-Wash out Valves** |  |  |  |  |
|  | 2543 | **RHD4-02-002-L014-(IRRC)-Air Valve Chamber** |  |  |  |  |
|  | 2544 | **RHD4-02-002-L014-(IRRC)-Air Valves** |  |  |  |  |
|  | 2586 | **RHD4-02-002-Z4-L014-Road Works - RD** |  | 2026-08-23 | 2027-09-16 |  |
|  | 2587 | **RHD4-02-002-L014-(RD)-Subgrade** |  | 2026-08-23 | 2026-08-27 |  |
| RHD4CZ4L014RD1100 |  | Supply, lay and compaction subgrade compacted thickness 300 mm for Roads - (RD-L-14)-Z4-L014-RD | 5d | 2026-08-23 | 2026-08-27 | RHD4ENSDZ4APPRD220, RHD4ENSDZ4APPEW100 SS, RHD4CZ4L014ST1510 |
|  | 2588 | **RHD4-02-002-L014-(RD)-Aggregate Base Course** |  | 2026-08-29 | 2026-09-02 |  |
| RHD4CZ4L014RD2100 |  | Supply, lay and compaction Aggregate base course compacted thickness 300 mmfor Roads - (RD-L-14)-Z4-L014-RD | 5d | 2026-08-29 | 2026-09-02 | RHD4PRSHLDOSRD1000, RHD4PRSHLSTAGRD1000, RHD4CZ4L014RD1100 |
|  | 2589 | **RHD4-02-002-L014-(RD)-Bituminous base course Two Layers, including (MC1)&(RC2)** |  | 2026-09-03 | 2027-07-29 |  |
| RHD4CZ4L014RD3100 |  | Supply, lay and Asphaltic base course including Prime Coat (MC1) for 1st Layer - (RD-L-14)-Z4-L014-RD | 3d | 2026-09-03 | 2026-09-06 | RHD4CZ4L014RD2100, RHD4PRSHLDOSRD1100, RHD4ENMSASPH2000, RHD4ENMSASPH2010, RHD4PRSHLSTAGRD1100 |
| RHD4CZ4L014RD3200 |  | Supply, lay and Asphaltic base course including Tack Coat (RC2) for 2nd Layer - (RD-L-14)-Z4-L014-RD | 3d | 2027-07-27 | 2027-07-29 | RHD4CZ4L014RD3100, RHD4PRSHLDOSRD1100, RHD4PRSHLSTAGRD1100, RHD4CZ4L014CCTV6100 |
|  | 2591 | **RHD4-02-002-L014-(RD)-Precast Concrete Curb** |  | 2027-07-31 | 2027-08-10 |  |
| RHD4CZ4L014RD5100 |  | Supply and installation Precast Concrete Kerb for Roads - (RD-L-14)-Z4-L014-RD | 10d | 2027-07-31 | 2027-08-10 | RHD4PRSHLDOSRD1200, RHD4ENMSRD2000, RHD4ENMSRD2010, RHD4PRSHLSTAGRD1200, RHD4CZ4L014RD3200 |
|  | 2594 | **RHD4-02-002-L014-(RD)-Traffic Signage** |  | 2027-08-11 | 2027-08-18 |  |
| RHD4CZ4L014RD8100 |  | Installation of Traffic Signage for Road Network - (RD-L-14)-Z4-L014-RD | 7d | 2027-08-11 | 2027-08-18 | RHD4CZ4L014RD5100, RHD4CZ4L014TC2400, RHD4CZ4L014ICT2400, RHD4PRSHLDOSRD1600, RHD4PRSHLSTAGRD1600, RHD4CZ4A013RD8100, RHD4CZ4B07BF4001 |
|  | 2592 | **RHD4-02-002-L014-(RD)-Precast Interlocking Block Pavers** |  | 2027-08-19 | 2027-09-06 |  |
| RHD4CZ4L014RD6100 |  | Interlocking block pavers for sidewalk-footpath for Side walks and Parking areas - (RD-L-14)-Z4-L014-RD | 16d | 2027-08-19 | 2027-09-06 | RHD4CZ4L014RD8100, RHD4PRSHLDOSRD1300, RHD4PRSHLDOSRD1400, RHD4ENMSRD2000, RHD4ENMSRD2010, RHD4PRSHLSTAGRD1300, RHD4PRSHLSTAGRD1400 |
|  | 2590 | **RHD4-02-002-L014-(RD)-Bituminous concrete wearing course including tack coat (RC2)** |  | 2027-09-07 | 2027-09-09 |  |
| RHD4CZ4L014RD4100 |  | Supply, lay and compaction Asphaltic wearing course including tack Coat (RC2)for Road Network - (RD-L-14)-Z4-L014-RD | 3d | 2027-09-07 | 2027-09-09 | RHD4CZ4L014RD5100, RHD4CZ4L014RD6100, RHD4CZ4A013RD4100 |
|  | 2593 | **RHD4-02-002-L014-(RD)-Pavement Marking** |  | 2027-09-11 | 2027-09-16 |  |
| RHD4CZ4L014RD7100 |  | Pavement Markings for Road Network - (RD-L-14)-Z4-L014-RD | 6d | 2027-09-11 | 2027-09-16 | RHD4CZ4L014RD4100, RHD4PRSHLDOSRD1500, RHD4PRSHLSTAGRD1500, RHD4CZ4A013RD7100 |
|  | 2411 | **RHD4-02-002-Z4-L014-Storm Network - ST** |  | 2026-08-10 | 2026-11-24 |  |
|  | 6394 | **RHD4-02-002-L014-(ST)-GRP Pipes - 1400 mm diameter** |  | 2026-08-10 | 2026-08-22 |  |
| RHD4CZ4L014ST1110 |  | Excavation works for GRP Pipe Line 1400 mm - (RD-L-14)-Z4-L014-ST | 2d | 2026-08-10 | 2026-08-11 | RHD4CZ5C061ST1100 |
| RHD4CZ4L014ST1210 |  | Bedding works for GRP Pipe Line 1400 mm - (RD-L-14)-Z4-L014-ST | 2d | 2026-08-13 | 2026-08-15 | RHD4CZ5C061ST3501, RHD4CZ4L014ST1110 |
| RHD4CZ4L014ST1310 |  | Installing for GRP Pipe Line 1400 mm - (RD-L-14)-Z4-L014-ST | 2d | 2026-08-16 | 2026-08-17 | RHD4CZ4L014ST1210 |
| RHD4CZ4L014ST1410 |  | Primary Test for GRP Pipe Line 1400 mm - (RD-L-14)-Z4-L014-ST | 2d | 2026-08-18 | 2026-08-19 | RHD4CZ4L014ST1310 |
| RHD4CZ4L014ST1510 |  | Backfilling and warning tape works for GRP Pipe Line 1400 mm - (RD-L-14)-Z4-L014-ST | 2d | 2026-08-20 | 2026-08-22 | RHD4CZ4L014ST1410 |
|  | 6393 | **RHD4-02-002-L014-(ST)-GRP Pipes - 1300 mm diameter** |  | 2026-08-12 | 2026-08-26 |  |
| RHD4CZ4L014ST1109 |  | Excavation works for GRP Pipe Line 1300 mm - (RD-L-14)-Z4-L014-ST | 3d | 2026-08-12 | 2026-08-15 | RHD4CZ4L014ST1110 |
| RHD4CZ4L014ST1209 |  | Bedding works for GRP Pipe Line 1300 mm - (RD-L-14)-Z4-L014-ST | 3d | 2026-08-16 | 2026-08-18 | RHD4CZ4L014ST1109 |
| RHD4CZ4L014ST1309 |  | Installing for GRP Pipe Line 1300 mm - (RD-L-14)-Z4-L014-ST | 2d | 2026-08-19 | 2026-08-20 | RHD4CZ4L014ST1209 |
| RHD4CZ4L014ST1409 |  | Primary Test for GRP Pipe Line 1300 mm - (RD-L-14)-Z4-L014-ST | 2d | 2026-08-22 | 2026-08-23 | RHD4CZ4L014ST1309 |
| RHD4CZ4L014ST1509 |  | Backfilling and warning tape works for GRP Pipe Line 1300 mm - (RD-L-14)-Z4-L014-ST | 3d | 2026-08-24 | 2026-08-26 | RHD4CZ4L014ST1409, RHD4CZ4L014ST1510 |
|  | 2428 | **RHD4-02-002-L014-(ST)-MH Works - 1200 mm diameter** |  | 2026-08-27 | 2026-09-07 |  |
| RHD4CZ4L014ST3100 |  | Excavation and PC Blinding works for MH 1200 mm - (RD-L-14)-Z4-L014-ST | 2d | 2026-08-27 | 2026-08-29 | RHD4ENSDZ4APPST110, RHD4ENMSST2000, RHD4ENMSST2010, RHD4CZ4L014ST1509 |
| RHD4CZ4L014ST3200 |  | Installation of Base for MH 1200 mm - (RD-L-14)-Z4-L014-ST | 2d | 2026-08-30 | 2026-08-31 | RHD4CZ4L014ST3100, RHD4PRSHLSTAGST1603 |
| RHD4CZ4L014ST3300 |  | MH Ring and C.Slab works and Backfilling works for MH 1200 mm - (RD-L-14)-Z4-L014-ST | 2d | 2026-09-01 | 2026-09-02 | RHD4CZ4L014ST3200, RHD4PRSHLDOSST1603 |
| RHD4CZ4L014ST3400 |  | Steel Cover for MH 1200 mm - (RD-L-14)-Z4-L014-ST | 2d | 2026-09-03 | 2026-09-05 | RHD4CZ4L014ST3300, RHD4PRSHLDOSST1703, RHD4PRSHLSTAGST1703 |
| RHD4CZ4L014ST3500 |  | Finishing, Benching, Testing works for MH 1200 mm - (RD-L-14)-Z4-L014-ST | 2d | 2026-09-06 | 2026-09-07 | RHD4CZ4L014ST3400 |
|  | 2430 | **RHD4-02-002-L014-(ST)-MH Works - 2000 mm diameter** |  | 2026-10-04 | 2026-11-16 |  |
| RHD4CZ4L014ST3102 |  | Excavation and PC Blinding works for MH 2000 mm - (RD-L-14)-Z4-L014-ST | 6d | 2026-10-04 | 2026-10-10 | RHD4CZ4L014ST3100, RHD4ENSDZ4APPST110, RHD4ENMSST2000, RHD4CZ4C031ST3100, RHD4CZ2L102ST1502, RHD4CZ7RA03MV5400, RHD4CZ7L015ICT3400, RHD4CZ3C083ST8500 |
| RHD4CZ4L014ST3202 |  | Installation of Base for MH 2000 mm - (RD-L-14)-Z4-L014-ST | 8d | 2026-10-11 | 2026-10-19 | RHD4CZ4L014ST3102, RHD4CZ4L014ST3200, RHD4PRSHLSTAGST1603, RHD4CZ4L014RD3100, RHD4CZ4A013MV2400 |
| RHD4CZ4L014ST3302 |  | MH Ring and C.Slab works and Backfilling works for MH 2000 mm - (RD-L-14)-Z4-L014-ST | 8d | 2026-10-20 | 2026-10-28 | RHD4CZ4L014ST3202, RHD4CZ4L014ST3300, RHD4PRSHLDOSST1603 |
| RHD4CZ4L014ST3402 |  | Steel Cover for MH 2000 mm - (RD-L-14)-Z4-L014-ST | 6d | 2026-11-03 | 2026-11-09 | RHD4CZ4L014ST3302, RHD4CZ4L014ST1500, RHD4CZ4L014ST3400 SS, RHD4PRSHLDOSST1703, RHD4PRSHLSTAGST1703 |
| RHD4CZ4L014ST3502 |  | Finishing, Benching, Testing works for MH 2000 mm - (RD-L-14)-Z4-L014-ST | 6d | 2026-11-10 | 2026-11-16 | RHD4CZ4L014ST3402, RHD4CZ4L014ST3500 SS, RHD4CZ7A012LV2400 |

| ID | WBS | Task | Duration | Start | Finish | Predecessors |
| --- | --- | --- | --- | --- | --- | --- |
|  | 2429 | **RHD4-02-002-L014-(ST)-MH Works - 1500 mm diameter** |  | 2026-10-11 | 2026-11-24 |  |
| RHD4CZ4L014ST3101 |  | Excavation and PC Blinding works for MH 1500 mm - (RD-L-14)-Z4-L014-ST | 2d | 2026-10-11 | 2026-10-12 | RHD4CZ4L014ST3102, RHD4ENSDZ4APPST110, RHD4ENMSST2000 |
| RHD4CZ4L014ST3201 |  | Installation of Base for MH 1500 mm - (RD-L-14)-Z4-L014-ST | 2d | 2026-10-20 | 2026-10-21 | RHD4CZ4L014ST3101, RHD4CZ4L014ST3202, RHD4PRSHLSTAGST1603 |
| RHD4CZ4L014ST3301 |  | MH Ring and C.Slab works and Backfilling works for MH 1500 mm - (RD-L-14)-Z4-L014-ST | 2d | 2026-10-29 | 2026-10-31 | RHD4CZ4L014ST3201, RHD4CZ4L014ST3302, RHD4PRSHLDOSST1603 |
| RHD4CZ4L014ST3401 |  | Steel Cover for MH 1500 mm - (RD-L-14)-Z4-L014-ST | 2d | 2026-11-21 | 2026-11-22 | RHD4CZ4L014ST3301, RHD4CZ4L014ST1500, RHD4CZ4L014ST3402 SS, RHD4PRSHLDOSST1703, RHD4PRSHLSTAGST1703, RHD4CZ4L014ST2500 |
| RHD4CZ4L014ST3501 |  | Finishing, Benching, Testing works for MH 1500 mm - (RD-L-14)-Z4-L014-ST | 2d | 2026-11-23 | 2026-11-24 | RHD4CZ4L014ST3401, RHD4CZ4L014ST2500, RHD4CZ4L014ST3502 SS |
|  | 2420 | **RHD4-02-002-L014-(ST)-GRP Pipes - 1200 mm diameter** |  |  |  |  |
|  | 2419 | **RHD4-02-002-L014-(ST)-GRP Pipes - 1100 mm diameter** |  | 2026-10-13 | 2026-10-24 |  |
| RHD4CZ4L014ST1107 |  | Excavation works for GRP Pipe Line 1100 mm - (RD-L-14)-Z4-L014-ST | 2d | 2026-10-13 | 2026-10-14 | RHD4ENSDZ4APPST110, RHD4CZ4L014ST3101, RHD4CZ4L014ST1109 |
| RHD4CZ4L014ST1207 |  | Bedding works for GRP Pipe Line 1100 mm - (RD-L-14)-Z4-L014-ST | 2d | 2026-10-15 | 2026-10-17 | RHD4CZ4L014ST1107 |
| RHD4CZ4L014ST1307 |  | Installing for GRP Pipe Line 1100 mm - (RD-L-14)-Z4-L014-ST | 2d | 2026-10-18 | 2026-10-19 | RHD4CZ4L014ST1207, RHD4PRSHLSTAGST1003, RHD4PRSHLDOSST1603, RHD4PRSHLPOST1000, RHD4PRSHLDOSST1003 |
| RHD4CZ4L014ST1407 |  | Primary Test for GRP Pipe Line 1100 mm - (RD-L-14)-Z4-L014-ST | 2d | 2026-10-20 | 2026-10-21 | RHD4CZ4L014ST1307 |
| RHD4CZ4L014ST1507 |  | Backfilling and warning tape works for GRP Pipe Line 1100 mm - (RD-L-14)-Z4-L014-ST | 2d | 2026-10-22 | 2026-10-24 | RHD4CZ4L014ST1407 |
|  | 2418 | **RHD4-02-002-L014-(ST)-GRP Pipes - 1000 mm diameter** |  | 2026-10-15 | 2026-10-26 |  |
| RHD4CZ4L014ST1106 |  | Excavation works for GRP Pipe Line 1000 mm - (RD-L-14)-Z4-L014-ST | 2d | 2026-10-15 | 2026-10-17 | RHD4CZ4L014ST1107, RHD4ENSDZ4APPST110, RHD4CZ4L014ST1107 FF |
| RHD4CZ4L014ST1206 |  | Bedding works for GRP Pipe Line 1000 mm - (RD-L-14)-Z4-L014-ST | 2d | 2026-10-18 | 2026-10-19 | RHD4CZ4L014ST1106, RHD4CZ4L014ST1207 |
| RHD4CZ4L014ST1306 |  | Installing for GRP Pipe Line 1000 mm - (RD-L-14)-Z4-L014-ST | 2d | 2026-10-20 | 2026-10-21 | RHD4CZ4L014ST1206, RHD4CZ4L014ST1307, RHD4PRSHLSTAGST1003, RHD4PRSHLDOSST1603, RHD4PRSHLPOST1000, RHD4PRSHLDOSST1003 |
| RHD4CZ4L014ST1406 |  | Primary Test for GRP Pipe Line 1000 mm - (RD-L-14)-Z4-L014-ST | 2d | 2026-10-22 | 2026-10-24 | RHD4CZ4L014ST1306, RHD4CZ4L014ST1407 |
| RHD4CZ4L014ST1506 |  | Backfilling and warning tape works for GRP Pipe Line 1000 mm - (RD-L-14)-Z4-L014-ST | 2d | 2026-10-25 | 2026-10-26 | RHD4CZ4L014ST1406, RHD4CZ4L014ST1507 |
|  | 2417 | **RHD4-02-002-L014-(ST)-GRP Pipes - 900 mm diameter** |  | 2026-10-18 | 2026-10-28 |  |
| RHD4CZ4L014ST1105 |  | Excavation works for GRP Pipe Line 900 mm - (RD-L-14)-Z4-L014-ST | 2d | 2026-10-18 | 2026-10-19 | RHD4CZ4L014ST1106, RHD4ENSDZ4APPST110 |
| RHD4CZ4L014ST1205 |  | Bedding works for GRP Pipe Line 900 mm - (RD-L-14)-Z4-L014-ST | 2d | 2026-10-20 | 2026-10-21 | RHD4CZ4L014ST1105, RHD4CZ4L014ST1206 |
| RHD4CZ4L014ST1305 |  | Installing for GRP Pipe Line 900 mm - (RD-L-14)-Z4-L014-ST | 2d | 2026-10-22 | 2026-10-24 | RHD4CZ4L014ST1205, RHD4CZ4L014ST1306, RHD4PRSHLSTAGST1003, RHD4PRSHLDOSST1603, RHD4PRSHLPOST1000, RHD4PRSHLDOSST1003 |
| RHD4CZ4L014ST1405 |  | Primary Test for GRP Pipe Line 900 mm - (RD-L-14)-Z4-L014-ST | 2d | 2026-10-25 | 2026-10-26 | RHD4CZ4L014ST1305, RHD4CZ4L014ST1406, RHD4CZ6A015PT3200, RHD4CZ6C052PT4500 |
| RHD4CZ4L014ST1505 |  | Backfilling and warning tape works for GRP Pipe Line 900 mm - (RD-L-14)-Z4-L014-ST | 2d | 2026-10-27 | 2026-10-28 | RHD4CZ4L014ST1405, RHD4CZ4L014ST1506 |
|  | 2416 | **RHD4-02-002-L014-(ST)-GRP Pipes - 800 mm diameter** |  |  |  |  |
|  | 2415 | **RHD4-02-002-L014-(ST)-GRP Pipes - 700 mm diameter** |  |  |  |  |
|  | 2414 | **RHD4-02-002-L014-(ST)-GRP Pipes - 600 mm diameter** |  |  |  |  |
|  | 2413 | **RHD4-02-002-L014-(ST)-GRP Pipes - 500 mm diameter** |  | 2026-10-20 | 2026-10-31 |  |
| RHD4CZ4L014ST1101 |  | Excavation works for GRP Pipe Line 500 mm - (RD-L-14)-Z4-L014-ST | 2d | 2026-10-20 | 2026-10-21 | RHD4ENSDZ4APPST110, RHD4CZ4L014ST1105 |
| RHD4CZ4L014ST1201 |  | Bedding works for GRP Pipe Line 500 mm - (RD-L-14)-Z4-L014-ST | 2d | 2026-10-22 | 2026-10-24 | RHD4CZ4L014ST1101 |
| RHD4CZ4L014ST1301 |  | Installing for GRP Pipe Line 500 mm - (RD-L-14)-Z4-L014-ST | 2d | 2026-10-25 | 2026-10-26 | RHD4CZ4L014ST1201, RHD4PRSHLSTAGST1003, RHD4PRSHLDOSST1603, RHD4PRSHLPOST1000, RHD4PRSHLDOSST1003 |
| RHD4CZ4L014ST1401 |  | Primary Test for GRP Pipe Line 500 mm - (RD-L-14)-Z4-L014-ST | 2d | 2026-10-27 | 2026-10-28 | RHD4CZ4L014ST1301 |
| RHD4CZ4L014ST1501 |  | Backfilling and warning tape works for GRP Pipe Line 500 mm - (RD-L-14)-Z4-L014-ST | 2d | 2026-10-29 | 2026-10-31 | RHD4CZ4L014ST1401 |
|  | 2412 | **RHD4-02-002-L014-(ST)-GRP Pipes - 400 mm diameter** |  | 2026-10-22 | 2026-11-02 |  |
| RHD4CZ4L014ST1100 |  | Excavation works for GRP Pipe Line 400 mm - (RD-L-14)-Z4-L014-ST | 2d | 2026-10-22 | 2026-10-24 | RHD4CZ4L014ST1101, RHD4ENSDZ4APPST110 |
| RHD4CZ4L014ST1200 |  | Bedding works for GRP Pipe Line 400 mm - (RD-L-14)-Z4-L014-ST | 2d | 2026-10-25 | 2026-10-26 | RHD4CZ4L014ST1100, RHD4CZ4L014ST1201 |
| RHD4CZ4L014ST1300 |  | Installing for GRP Pipe Line 400 mm - (RD-L-14)-Z4-L014-ST | 2d | 2026-10-27 | 2026-10-28 | RHD4CZ4L014ST1200, RHD4CZ4L014ST1301, RHD4PRSHLSTAGST1003, RHD4PRSHLDOSST1603, RHD4PRSHLPOST1000, RHD4PRSHLDOSST1003 |
| RHD4CZ4L014ST1400 |  | Primary Test for GRP Pipe Line 400 mm - (RD-L-14)-Z4-L014-ST | 2d | 2026-10-29 | 2026-10-31 | RHD4CZ4L014ST1300, RHD4CZ4L014ST1401 |
| RHD4CZ4L014ST1500 |  | Backfilling and warning tape works for GRP Pipe Line 400 mm - (RD-L-14)-Z4-L014-ST | 2d | 2026-11-01 | 2026-11-02 | RHD4CZ4L014ST1400, RHD4CZ4L014ST1501 |
|  | 2427 | **RHD4-02-002-L014-(ST)-UPVC Pipes - 400 mm diameter** |  |  |  |  |
|  | 2426 | **RHD4-02-002-L014-(ST)-UPVC Pipes - 300 mm diameter** |  | 2026-11-01 | 2026-11-19 |  |
| RHD4CZ4L014ST2100 |  | Excavation works for UPVC Pipe Line 300 mm - (RD-L-14)-Z4-L014-ST | 4d | 2026-11-01 | 2026-11-04 | RHD4CZ4L014ST3300, RHD4CZ4L014ST3301, RHD4ENSDZ4APPST110 |
| RHD4CZ4L014ST2200 |  | Bedding works for UPVC Pipe Line 300 mm - (RD-L-14)-Z4-L014-ST | 3d | 2026-11-05 | 2026-11-08 | RHD4CZ4L014ST2100 |
| RHD4CZ4L014ST2300 |  | Installing for UPVC Pipe Line 300 mm - (RD-L-14)-Z4-L014-ST | 4d | 2026-11-09 | 2026-11-12 | RHD4CZ4L014ST2200, RHD4PRSHLDOSST1103, RHD4PRSHLSTAGST1103, RHD4PRSHLSTAIRRC1000 |
| RHD4CZ4L014ST2400 |  | Primary Test for UPVC Pipe Line 300 mm - (RD-L-14)-Z4-L014-ST | 2d | 2026-11-14 | 2026-11-15 | RHD4CZ4L014ST2300 |
| RHD4CZ4L014ST2500 |  | Backfilling and warning tape works for UPVC Pipe Line 300 mm - (RD-L-14)-Z4-L014-ST | 4d | 2026-11-16 | 2026-11-19 | RHD4CZ4L014ST2400, RHD4CZ4L014ST6100 |
|  | 2434 | **RHD4-02-002-L014-(ST)-Concrete Encasement** |  | 2026-11-11 | 2026-11-12 |  |
| RHD4CZ4L014ST6100 |  | Pipe Encasement for Storm Pipelines - (RD-L-14)-Z4-L014-ST | 2d | 2026-11-11 | 2026-11-12 | RHD4CZ4L014ST2300 SS, RHD4CZ4L014ST2300 FF, RHD4CZ4L014ST2200 |
|  | 2435 | **RHD4-02-002-Z4-L014-Catch Basin - ST** |  | 2026-11-01 | 2026-12-07 |  |
|  | 2436 | **RHD4-02-002-L014-(ST)-Single Catch Basin Works** |  | 2026-11-01 | 2026-12-05 |  |
| RHD4CZ4L014ST7100 |  | Excavation works for Single Catch Basin - (RD-L-14)-Z4-L014-ST | 5d | 2026-11-01 | 2026-11-05 | RHD4CZ4L014ST3300, RHD4CZ4L014ST3301, RHD4ENSDZ4APPST110 |
| RHD4CZ4L014ST7200 |  | PC Blinding, Installation and Pipe connection for Single Catch Basin - (RD-L-14)-Z4-L014-ST | 5d | 2026-11-07 | 2026-11-11 | RHD4CZ4L014ST7100 |
| RHD4CZ4L014ST7300 |  | Rings & C.Slab & Final Backfill for Single Catch Basin - (RD-L-14)-Z4-L014-ST | 6d | 2026-11-12 | 2026-11-18 | RHD4CZ4L014ST7200, RHD4PRSHLDOSST1303, RHD4PRSHLSTAGST1303 |
| RHD4CZ4L014ST7400 |  | Steel Cover for Single Catch Basin - (RD-L-14)-Z4-L014-ST | 5d | 2026-11-19 | 2026-11-24 | RHD4CZ4L014ST7300, RHD4PRSHLDOSST1703 |
| RHD4CZ4L014ST7500 |  | Finishing and Insulation works for Single Catch Basin - (RD-L-14)-Z4-L014-ST | 9d | 2026-11-25 | 2026-12-05 | RHD4CZ4L014ST7400 |
|  | 2437 | **RHD4-02-002-L014-(ST)-Double Catch Basin Works** |  | 2026-11-07 | 2026-12-07 |  |
| RHD4CZ4L014ST8100 |  | Excavation works for Double Catch Basin - (RD-L-14)-Z4-L014-ST | 2d | 2026-11-07 | 2026-11-08 | RHD4CZ4L014ST7100, RHD4CZ4L014ST3300, RHD4CZ4L014ST3301, RHD4ENSDZ4APPST110 |
| RHD4CZ4L014ST8200 |  | PC Blinding, Installation and Pipe connection for Double Catch Basin - (RD-L-14)-Z4-L014-ST | 2d | 2026-11-12 | 2026-11-14 | RHD4CZ4L014ST8100, RHD4CZ4L014ST7200 |
| RHD4CZ4L014ST8300 |  | Rings & C.Slab & Final Backfillfor Double Catch Basin - (RD-L-14)-Z4-L014-ST | 2d | 2026-11-19 | 2026-11-21 | RHD4CZ4L014ST8200, RHD4CZ4L014ST7300, RHD4PRSHLDOSST1303, RHD4PRSHLSTAGST1303 |
| RHD4CZ4L014ST8400 |  | Steel Cover for Double Catch Basin - (RD-L-14)-Z4-L014-ST | 2d | 2026-11-25 | 2026-11-26 | RHD4CZ4L014ST8300, RHD4CZ4L014ST7400, RHD4PRSHLDOSST1703 |
| RHD4CZ4L014ST8500 |  | Finishing and Insulation works for Double Catch Basin - (RD-L-14)-Z4-L014-ST | 2d | 2026-12-06 | 2026-12-07 | RHD4CZ4L014ST8400, RHD4CZ4L014ST7500 |
|  | 2460 | **RHD4-02-002-Z4-L014-Sewage Network - SW** |  | 2026-11-05 | 2027-01-24 |  |
|  | 5307 | **RHD4-02-002-L014-(SW)-MH Works - 1200 mm diameter** |  | 2026-11-05 | 2027-01-24 |  |
| RHD4CZ4L014SW3100 |  | Excavation and PC Blinding works for MH 1200 mm - (RD-L-14)-Z4-L014-SW | 10d | 2026-11-05 | 2026-11-16 | RHD4CZ4L014ST2100 |
| RHD4CZ4L014SW3200 |  | Installation of Base for MH 1200 mm - (RD-L-14)-Z4-L014-SW | 17d | 2026-11-17 | 2026-12-06 | RHD4CZ4L014SW3100 |
| RHD4CZ4L014SW3300 |  | MH Ring and C.Slab works and Backfilling works for MH 1200 mm - (RD-L-14)-Z4-L014-SW | 17d | 2026-12-07 | 2026-12-26 | RHD4CZ4L014SW3200 |
| RHD4CZ4L014SW3400 |  | Steel Cover for MH 1200 mm - (RD-L-14)-Z4-L014-SW | 8d | 2026-12-27 | 2027-01-04 | RHD4CZ4L014SW3300 |
| RHD4CZ4L014SW3500 |  | Finishing, Benching, Testing works for MH 1200 mm - (RD-L-14)-Z4-L014-SW | 17d | 2027-01-05 | 2027-01-24 | RHD4CZ4L014SW1500, RHD4CZ4L014IRR3202, RHD4CZ4L014SW3400 |
|  | 1325 | **RHD4-02-002-L014-(SW)-GRP Pipes - 300 mm diameter** |  | 2026-11-05 | 2026-12-27 |  |

| ID | WBS | Task | Duration | Start | Finish | Predecessors |
| --- | --- | --- | --- | --- | --- | --- |
| RHD4CZ4L014SW1100 |  | Excavation works for GRP Pipe Line 300 mm - (RD-L-14)-Z4-L014-SW | 9d | 2026-11-05 | 2026-11-15 | RHD4CZ4L014ST2100 |
| RHD4CZ4L014SW1200 |  | Bedding works for GRP Pipe Line 300 mm - (RD-L-14)-Z4-L014-SW | 9d | 2026-11-16 | 2026-11-25 | RHD4CZ4L014SW1100 |
| RHD4CZ4L014SW1300 |  | Installing for GRP Pipe Line 300 mm - (RD-L-14)-Z4-L014-SW | 9d | 2026-11-26 | 2026-12-06 | RHD4CZ4L014SW1200 |
| RHD4CZ4L014SW1400 |  | Primary Test for GRP Pipe Line 300 mm - (RD-L-14)-Z4-L014-SW | 9d | 2026-12-07 | 2026-12-16 | RHD4CZ4L014SW1300 |
| RHD4CZ4L014SW1500 |  | Backfilling and warning tape works for GRP Pipe Line 300 mm - (RD-L-14)-Z4-L014-SW | 9d | 2026-12-17 | 2026-12-27 | RHD4CZ4L014SW3501, RHD4CZ4L014SW1400 |
|  | 957 | **RHD4-02-002-L014-(SW)-MH Works - 1200 mm diameter with Back drop** |  | 2026-11-05 | 2026-11-30 |  |
| RHD4CZ4L014SW3101 |  | Excavation and PC Blinding works for MH 1200 mm - (RD-L-14)-Z4-L014-SW | 4d | 2026-11-05 | 2026-11-09 | RHD4CZ4L014ST2100 |
| RHD4CZ4L014SW3201 |  | Installation of Base for MH 1200 mm - (RD-L-14)-Z4-L014-SW | 5d | 2026-11-10 | 2026-11-15 | RHD4CZ4L014SW3101 |
| RHD4CZ4L014SW3301 |  | MH Ring and C.Slab works and Backfilling works for MH 1200 mm - (RD-L-14)-Z4-L014-SW | 5d | 2026-11-16 | 2026-11-21 | RHD4CZ4L014SW3201 |
| RHD4CZ4L014SW3401 |  | Steel Cover for MH 1200 mm - (RD-L-14)-Z4-L014-SW | 3d | 2026-11-22 | 2026-11-24 | RHD4CZ4L014SW3301 |
| RHD4CZ4L014SW3501 |  | Finishing, Benching, Testing works for MH 1200 mm - (RD-L-14)-Z4-L014-SW | 5d | 2026-11-25 | 2026-11-30 | RHD4CZ4L014SW2500, RHD4CZ4L014SW3401 |
|  | 2464 | **RHD4-02-002-L014-(SW)-GRP Pipes - 600 mm diameter** |  |  |  |  |
|  | 2463 | **RHD4-02-002-L014-(SW)-GRP Pipes - 500 mm diameter** |  |  |  |  |
|  | 2466 | **RHD4-02-002-L014-(SW)-UPVC Pipes - 200 mm diameter** |  | 2026-11-05 | 2026-11-18 |  |
| RHD4CZ4L014SW2100 |  | Excavation works for UPVC Pipe Line 200 mm - (RD-L-14)-Z4-L014-SW | 2d | 2026-11-05 | 2026-11-07 | RHD4ENSDZ4APPSW120, RHD4CZ4L014ST2100 |
| RHD4CZ4L014SW2200 |  | Bedding works for UPVC Pipe Line 200 mm - (RD-L-14)-Z4-L014-SW | 2d | 2026-11-08 | 2026-11-09 | RHD4CZ4L014SW2100 |
| RHD4CZ4L014SW2300 |  | Installing for UPVC Pipe Line 200 mm - (RD-L-14)-Z4-L014-SW | 3d | 2026-11-10 | 2026-11-12 | RHD4CZ4L014SW2200, RHD4PRSHLDOSSW1003, RHD4PRSHLSTAGSW1003 |
| RHD4CZ4L014SW2400 |  | Primary Test for UPVC Pipe Line 200 mm - (RD-L-14)-Z4-L014-SW | 2d | 2026-11-14 | 2026-11-15 | RHD4CZ4L014SW2300 |
| RHD4CZ4L014SW2500 |  | Backfilling and warning tape works for UPVC Pipe Line 200 mm - (RD-L-14)-Z4-L014-SW | 3d | 2026-11-16 | 2026-11-18 | RHD4CZ4L014SW2400 |
|  | 2469 | **RHD4-02-002-L014-(SW)-Concrete Encasement** |  |  |  |  |
|  | 2497 | **RHD4-02-002-Z4-L014-Potable Network - PT** |  | 2026-12-06 | 2027-03-06 |  |
|  | 2498 | **RHD4-02-002-L014-(PT)-HDPE Pipes - 110 mm diameter** |  | 2026-12-06 | 2026-12-16 |  |
| RHD4CZ4L014PT1100 |  | Excavation works for HDPE Pipline 110 mm - (RD-L-14)-Z4-L014-PT | 2d | 2026-12-06 | 2026-12-07 | RHD4CZ4C031PT1503, RHD4ENSDZ4APPPT130, RHD4ENMSPT2000 |
| RHD4CZ4L014PT1200 |  | Bedding works for HDPE Pipline 110 mm - (RD-L-14)-Z4-L014-PT | 2d | 2026-12-08 | 2026-12-09 | RHD4CZ4L014PT1100 |
| RHD4CZ4L014PT1300 |  | Installing for HDPE Pipline 110 mm - (RD-L-14)-Z4-L014-PT | 2d | 2026-12-10 | 2026-12-12 | RHD4CZ4L014PT1200, RHD4PRSHLDOSPT1000, RHD4PRSHLSTAGPT1000 |
| RHD4CZ4L014PT1400 |  | Primary Test for HDPE Pipline 110 mm - (RD-L-14)-Z4-L014-PT | 2d | 2026-12-13 | 2026-12-14 | RHD4CZ4L014PT1300 |
| RHD4CZ4L014PT1500 |  | Backfilling and warning tape works for HDPE Pipline 110 mm - (RD-L-14)-Z4-L014-PT | 2d | 2026-12-15 | 2026-12-16 | RHD4CZ4L014PT1400, RHD4CZ4L014ST1505 |
|  | 2499 | **RHD4-02-002-L014-(PT)-HDPE Pipes - 160 mm diameter** |  | 2026-12-08 | 2027-01-28 |  |
| RHD4CZ4L014PT1101 |  | Excavation works for HDPE Pipline 160 mm - (RD-L-14)-Z4-L014-PT | 9d | 2026-12-08 | 2026-12-17 | RHD4ENSDZ4APPPT130, RHD4ENMSPT2000, RHD4CZ4L014PT1100 |
| RHD4CZ4L014PT1201 |  | Bedding works for HDPE Pipline 160 mm - (RD-L-14)-Z4-L014-PT | 9d | 2026-12-19 | 2026-12-28 | RHD4CZ4L014PT1101 |
| RHD4CZ4L014PT1301 |  | Installing for HDPE Pipline 160 mm - (RD-L-14)-Z4-L014-PT | 9d | 2026-12-29 | 2027-01-07 | RHD4CZ4L014PT1201, RHD4PRSHLDOSPT1000, RHD4PRSHLSTAGPT1000 |
| RHD4CZ4L014PT1401 |  | Primary Test for HDPE Pipline 160 mm - (RD-L-14)-Z4-L014-PT | 9d | 2027-01-09 | 2027-01-18 | RHD4CZ4L014PT1301 |
| RHD4CZ4L014PT1501 |  | Backfilling and warning tape works for HDPE Pipline 160 mm - (RD-L-14)-Z4-L014-PT | 9d | 2027-01-19 | 2027-01-28 | RHD4CZ4L014PT1401 |
|  | 2503 | **RHD4-02-002-L014-(PT)-Gate Valves (Direct Buried)** |  | 2027-01-05 | 2027-02-01 |  |
| RHD4CZ4L014PT3100 |  | Installation for Direct Buried Gate Valves - (RD-L-14)-Z4-L014-PT | 3d | 2027-01-05 | 2027-01-07 | RHD4CZ4L014PT1301 FF, RHD4CZ4L014PT1301 SS, RHD4PRSHLDOSPT1200, RHD4PRSHLSTAGPT1200 |
| RHD4CZ4L014PT3200 |  | Stem and Service box for Direct Buried Gate Valves - (RD-L-14)-Z4-L014-PT | 3d | 2027-01-30 | 2027-02-01 | RHD4CZ4L014PT3100, RHD4CZ4L014PT1501 |
|  | 2506 | **RHD4-02-002-L014-(PT)-Wash out Valve Chambers** |  | 2026-12-08 | 2026-12-16 |  |
| RHD4CZ4L014PT2101 |  | Excavation and Bedding for Wash out Valve Chambers for Potable Water Network - (RD-L-14)-Z4-L014-PT | 2d | 2026-12-08 | 2026-12-09 | RHD4ENSDZ4APPPT130, RHD4CZ4L014PT1100 |
| RHD4CZ4L014PT2201 |  | PC works for Wash out Valve Chambers for Potable Water Network - (RD-L-14)-Z4-L014-PT | 2d | 2026-12-10 | 2026-12-12 | RHD4CZ4L014PT2101 |
| RHD4CZ4L014PT2301 |  | Installation for Wash out Valve Chambers for Potable Water Network - (RD-L-14)-Z4-L014-PT | 2d | 2026-12-13 | 2026-12-14 | RHD4CZ4L014PT2201, RHD4PRSHLDOSPT1100, RHD4PRSHLDOSPT1400, RHD4PRSHLSTAGPT1100, RHD4PRSHLSTAGPT1400 |
| RHD4CZ4L014PT2401 |  | Backfilling works for Wash out Valve Chambers for Potable Water Network - (RD-L-14)-Z4-L014-PT | 2d | 2026-12-15 | 2026-12-16 | RHD4CZ4L014PT2301 |
|  | 2507 | **RHD4-02-002-L014-(PT)-Wash out Valves** |  | 2026-12-15 | 2026-12-19 |  |
| RHD4CZ4L014PT3102 |  | Installation for Wash out Valves for Potable Water Network - (RD-L-14)-Z4-L014-PT | 2d | 2026-12-15 | 2026-12-16 | RHD4CZ4L014PT2301, RHD4PRSHLDOSPT1200, RHD4PRSHLSTAGPT1200 |
| RHD4CZ4L014PT3202 |  | Stem and Service box for Wash out Valves for Potable Water Network - (RD-L-14)-Z4-L014-PT | 2d | 2026-12-17 | 2026-12-19 | RHD4CZ4L014PT3102, RHD4CZ4L014PT2401, RHD4PRSHLDOSPT1300, RHD4PRSHLSTAGPT1300 |
|  | 2508 | **RHD4-02-002-L014-(PT)-Air Valve Chambers** |  | 2026-12-10 | 2026-12-19 |  |
| RHD4CZ4L014PT2102 |  | Excavation and Bedding for Air Valve Chambers for Potable Water Network - (RD-L-14)-Z4-L014-PT | 2d | 2026-12-10 | 2026-12-12 | RHD4ENSDZ4APPPT130, RHD4CZ4L014PT2101 |
| RHD4CZ4L014PT2202 |  | PC works for Air Valve Chambers for Potable Water Network - (RD-L-14)-Z4-L014-PT | 2d | 2026-12-13 | 2026-12-14 | RHD4CZ4L014PT2102 |
| RHD4CZ4L014PT2302 |  | Installation for Air Valve Chambers for Potable Water Network - (RD-L-14)-Z4-L014-PT | 2d | 2026-12-15 | 2026-12-16 | RHD4CZ4L014PT2202, RHD4PRSHLDOSPT1100, RHD4PRSHLDOSPT1400, RHD4PRSHLSTAGPT1100, RHD4PRSHLSTAGPT1400 |
| RHD4CZ4L014PT2402 |  | Backfilling works for Air Valve Chambers for Potable Water Network - (RD-L-14)-Z4-L014-PT | 2d | 2026-12-17 | 2026-12-19 | RHD4CZ4L014PT2302 |
|  | 2509 | **RHD4-02-002-L014-(PT)-Air Valves** |  | 2026-12-17 | 2026-12-21 |  |
| RHD4CZ4L014PT3103 |  | Installation for Air Valves for Potable Water Network - (RD-L-14)-Z4-L014-PT | 2d | 2026-12-17 | 2026-12-19 | RHD4CZ4L014PT2302, RHD4PRSHLDOSPT1200, RHD4PRSHLSTAGPT1200 |
| RHD4CZ4L014PT3203 |  | Stem and Service box for Air Valves for Potable Water Network - (RD-L-14)-Z4-L014-PT | 2d | 2026-12-20 | 2026-12-21 | RHD4CZ4L014PT3103, RHD4CZ4L014PT2402, RHD4PRSHLDOSPT1300, RHD4PRSHLSTAGPT1300 |
|  | 2510 | **RHD4-02-002-L014-(PT)-Fire Hydrant** |  | 2027-01-30 | 2027-03-06 |  |
| RHD4CZ4L014PT4100 |  | Excavation and Bedding and Pipe Installation for Fire Hydrant - (RD-L-14)-Z4-L014-PT | 8d | 2027-01-30 | 2027-02-07 | RHD4CZ4L014PT1501, RHD4ENSDZ4APPPT130 |
| RHD4CZ4L014PT4200 |  | Valve Installation for Fire Hydrant - (RD-L-14)-Z4-L014-PT | 6d | 2027-02-08 | 2027-02-14 | RHD4CZ4L014PT4100 |
| RHD4CZ4L014PT4300 |  | Stem for Fire Hydrant - (RD-L-14)-Z4-L014-PT | 6d | 2027-02-15 | 2027-02-21 | RHD4CZ4L014PT4200 |
| RHD4CZ4L014PT4400 |  | Fire Installation for Fire Hydrant - (RD-L-14)-Z4-L014-PT | 6d | 2027-02-23 | 2027-03-01 | RHD4CZ4L014PT4300, RHD4PRSHLDOSPT1500, RHD4PRSHLSTAGPT1500, RHD4CZ4L014PT3203, RHD4CZ4L014PT3202, RHD4CZ4L014PT3200 |
| RHD4CZ4L014PT4500 |  | Protection Barriers for Fire Hydrant - (RD-L-14)-Z4-L014-PT | 4d | 2027-03-02 | 2027-03-06 | RHD4CZ4L014PT4400 |
|  | 2511 | **RHD4-02-002-L014-(PT)-Concrete Encasement** |  |  |  |  |
|  | 2512 | **RHD4-02-002-Z4-L014-Irrigation Network - IRR** |  | 2026-12-08 | 2027-02-01 |  |
|  | 2513 | **RHD4-02-002-L014-(IRR)-HDPE Pipes - 160 mm diameter** |  | 2026-12-19 | 2027-01-10 |  |
| RHD4CZ4L014IRR1100 |  | Excavation works for HDPE Pipline 160 mm - (RD-L-14)-Z4-L014-IRR | 5d | 2026-12-19 | 2026-12-23 | RHD4CZ4L014PT1101, RHD4ENSDZ4APPIRR140, RHD4ENMSRR2000, RHD4CZ4L014PT1100 |
| RHD4CZ4L014IRR1200 |  | Bedding works for HDPE Pipline 160 mm - (RD-L-14)-Z4-L014-IRR | 4d | 2026-12-24 | 2026-12-28 | RHD4CZ4L014IRR1100 |
| RHD4CZ4L014IRR1300 |  | Installing for HDPE Pipline 160 mm - (RD-L-14)-Z4-L014-IRR | 5d | 2026-12-29 | 2027-01-03 | RHD4CZ4L014IRR1200, RHD4PRSHLDOSIRR1000, RHD4PRSHLSTAGIRR1000 |
| RHD4CZ4L014IRR1400 |  | Primary Test for HDPE Pipline 160 mm - (RD-L-14)-Z4-L014-IRR | 2d | 2027-01-04 | 2027-01-05 | RHD4CZ4L014IRR1300 |
| RHD4CZ4L014IRR1500 |  | Backfilling and warning tape works for HDPE Pipline 160 mm - (RD-L-14)-Z4-L014-IRR | 4d | 2027-01-06 | 2027-01-10 | RHD4CZ4L014IRR1400 |
|  | 1770 | **RHD4-02-002-L014-(IRR)-Air Valves** |  | 2026-12-29 | 2027-01-02 |  |
| RHD4CZ4L014IRR3103 |  | Installation for Air Valves for Irrigation Network - (RD-L-14)-Z4-L014-IRR | 2d | 2026-12-29 | 2026-12-30 | RHD4CZ4L014IRR2302 |
| RHD4CZ4L014IRR3203 |  | Stem and Service box for Air Valves for Irrigation Network - (RD-L-14)-Z4-L014-IRR | 2d | 2026-12-31 | 2027-01-02 | RHD4CZ4L014IRR3103, RHD4CZ4L014IRR2402 |
|  | 2515 | **RHD4-02-002-L014-(IRR)-HDPE Pipes - 200 mm diameter** |  |  |  |  |

| ID | WBS | Task | Duration | Start | Finish | Predecessors |
| --- | --- | --- | --- | --- | --- | --- |
|  | 2516 | **RHD4-02-002-L014-(IRR)-HDPE Pipes - 250 mm diameter** |  | 2026-12-08 | 2027-02-01 |  |
| RHD4CZ4L014IRR1103 |  | Excavation works for HDPE Pipline 250 mm - (RD-L-14)-Z4-L014-IRR | 10d | 2026-12-08 | 2026-12-19 | RHD4ENSDZ4APPIRR140, RHD4ENMSRR2000, RHD4CZ4L014PT1100 |
| RHD4CZ4L014IRR1203 |  | Bedding works for HDPE Pipline 250 mm - (RD-L-14)-Z4-L014-IRR | 8d | 2026-12-20 | 2026-12-28 | RHD4CZ4L014IRR1103 |
| RHD4CZ4L014IRR1303 |  | Installing for HDPE Pipline 250 mm - (RD-L-14)-Z4-L014-IRR | 10d | 2026-12-29 | 2027-01-09 | RHD4CZ4L014IRR1203, RHD4PRSHLDOSIRR1000, RHD4PRSHLSTAGIRR1000 |
| RHD4CZ4L014IRR1403 |  | Primary Test for HDPE Pipline 250 mm - (RD-L-14)-Z4-L014-IRR | 8d | 2027-01-14 | 2027-01-23 | RHD4CZ4L014IRR1303, RHD4CZ4L014IRR5100 |
| RHD4CZ4L014IRR1503 |  | Backfilling and warning tape works for HDPE Pipline 250 mm - (RD-L-14)-Z4-L014-IRR | 8d | 2027-01-24 | 2027-02-01 | RHD4CZ4L014IRR1403 |
|  | 2521 | **RHD4-02-002-L014-(IRR)-Gate Valves (Direct Buried)** |  | 2027-01-05 | 2027-01-14 |  |
| RHD4CZ4L014IRR3100 |  | Installation for Direct Buried Gate Valves - (RD-L-14)-Z4-L014-IRR | 4d | 2027-01-05 | 2027-01-09 | RHD4CZ4L014IRR1303 SS, RHD4CZ4L014IRR1303 FF, RHD4CZ4L014IRR1300 SS, RHD4CZ4L014IRR1300 FF, RHD4PRSHLDOSIRR1100, RHD4PRSHLSTAGIRR1100 |
| RHD4CZ4L014IRR3200 |  | Stem and Service box for Direct Buried Gate Valves - (RD-L-14)-Z4-L014-IRR | 4d | 2027-01-11 | 2027-01-14 | RHD4CZ4L014IRR3100, RHD4CZ4L014IRR1500, RHD4PRSHLDOSIRR1300, RHD4PRSHLSTAGIRR1300 |
|  | 2528 | **RHD4-02-002-L014-(IRR)-Concrete Encasement** |  | 2026-12-29 | 2027-01-13 |  |
| RHD4CZ4L014IRR5100 |  | Pipe Encasement for Irrigation Pipelines - (RD-L-14)-Z4-L014-IRR | 14d | 2026-12-29 | 2027-01-13 | RHD4CZ4L014IRR1303 SS, RHD4CZ4L014IRR1300 SS, RHD4CZ4L014IRR1303 FF, RHD4CZ4L014IRR1300 FF, RHD4CZ4L014IRR1203, RHD4CZ4L014IRR1200 |
|  | 6685 | **RHD4-02-002-L014-(IRR)-Wash out Chamber** |  | 2026-12-20 | 2026-12-28 |  |
| RHD4CZ4L014IRR2101 |  | Excavation and Bedding for Wash out Chamber for Irrigation Network - (RD-L-14)-Z4-L014-IRR | 2d | 2026-12-20 | 2026-12-21 | RHD4CZ4L014IRR1103 |
| RHD4CZ4L014IRR2201 |  | PC works for Wash out Chamber for Irrigation Network - (RD-L-14)-Z4-L014-IRR | 2d | 2026-12-22 | 2026-12-23 | RHD4CZ4L014IRR2101 |
| RHD4CZ4L014IRR2301 |  | Installation for Wash out Chamber for Irrigation Network - (RD-L-14)-Z4-L014-IRR | 2d | 2026-12-24 | 2026-12-26 | RHD4CZ4L014IRR2201 |
| RHD4CZ4L014IRR2401 |  | Backfilling works for Wash out Chamber for Irrigation Network - (RD-L-14)-Z4-L014-IRR | 2d | 2026-12-27 | 2026-12-28 | RHD4CZ4L014IRR2301 |
|  | 6686 | **RHD4-02-002-L014-(IRR)-Wash out Valves** |  | 2026-12-27 | 2026-12-30 |  |
| RHD4CZ4L014IRR3102 |  | Installation for Wash out Valve for Irrigation Network - (RD-L-14)-Z4-L014-IRR | 2d | 2026-12-27 | 2026-12-28 | RHD4CZ4L014IRR2301 |
| RHD4CZ4L014IRR3202 |  | Stem and Service box for Wash out Valve for Irrigation Network - (RD-L-14)-Z4-L014-IRR | 2d | 2026-12-29 | 2026-12-30 | RHD4CZ4L014PT1500, RHD4CZ4L014IRR3102, RHD4CZ4L014IRR2401 |
|  | 1769 | **RHD4-02-002-L014-(IRR)-Air Valve Chamber** |  | 2026-12-22 | 2026-12-30 |  |
| RHD4CZ4L014IRR2102 |  | Excavation and Bedding for Valve Chamber for Irrigation Network - (RD-L-14)-Z4-L014-IRR | 2d | 2026-12-22 | 2026-12-23 | RHD4CZ4L014IRR2101 |
| RHD4CZ4L014IRR2202 |  | PC works for Valve Chamber for Irrigation Network - (RD-L-14)-Z4-L014-IRR | 2d | 2026-12-24 | 2026-12-26 | RHD4CZ4L014IRR2102 |
| RHD4CZ4L014IRR2302 |  | Installation for Valve Chamber for Irrigation Network - (RD-L-14)-Z4-L014-IRR | 2d | 2026-12-27 | 2026-12-28 | RHD4CZ4L014IRR2202 |
| RHD4CZ4L014IRR2402 |  | Backfilling works for Valve Chamber for Irrigation Network - (RD-L-14)-Z4-L014-IRR | 2d | 2026-12-29 | 2026-12-30 | RHD4CZ4L014IRR2302 |
|  | 2546 | **RHD4-02-002-Z4-L014-Medium Voltage Network - MV** |  | 2026-12-29 | 2027-02-11 |  |
|  | 2547 | **RHD4-02-002-L014-(MV)-Medium Voltage cable trench** |  | 2026-12-29 | 2027-01-27 |  |
| RHD4CZ4L014MV1100 |  | Excavation for Medium Voltage Trench - (RD-L-14)-Z4-L014-MV | 8d | 2026-12-29 | 2027-01-06 | RHD4ENSDZ4APPMV150, RHD4CZ4L014ST3102, RHD4CZ4L014RD3100, RHD4CZ4L014IRR2401 |
| RHD4CZ4L014MV1200 |  | Trench Backfilling for Medium Voltage Network - (RD-L-14)-Z4-L014-MV | 8d | 2027-01-19 | 2027-01-27 | RHD4CZ4L014MV3200, RHD4CZ4L014MV3101 |
|  | 2548 | **RHD4-02-002-L014-(MV)-Medium Voltage duct banks** |  | 2027-01-07 | 2027-01-20 |  |
| RHD4CZ4L014MV2100 |  | Excavation of Duct Banks for Medium Voltage Network - (RD-L-14)-Z4-L014-MV | 3d | 2027-01-07 | 2027-01-10 | RHD4ENSDZ4APPMV150, RHD4CZ4L014MV1100 |
| RHD4CZ4L014MV2200 |  | Installation of Duct Banks for Medium Voltage Network - (RD-L-14)-Z4-L014-MV | 4d | 2027-01-11 | 2027-01-14 | RHD4CZ4L014MV2100, RHD4PRSHLDOSMV1000, RHD4PRSHLSTAGMV1000 |
| RHD4CZ4L014MV2300 |  | Pouring of Duct Banks for Medium Voltage Network - (RD-L-14)-Z4-L014-MV | 3d | 2027-01-16 | 2027-01-18 | RHD4CZ4L014MV2200 |
| RHD4CZ4L014MV2400 |  | Backfilling of Duct Banks for Medium Voltage Network - (RD-L-14)-Z4-L014-MV | 2d | 2027-01-19 | 2027-01-20 | RHD4CZ4L014MV2300 |
|  | 2549 | **RHD4-02-002-L014-(MV)-Medium Voltage cables 3Cx 500 mm²** |  | 2027-01-07 | 2027-02-04 |  |
| RHD4CZ4L014MV3100 |  | Installation of Medium Voltage Cables 3Cx 500 mm² - (RD-L-14)-Z4-L014-MV | 5d | 2027-01-07 | 2027-01-12 | RHD4CZ4L014MV1100, RHD4PRSHLDOSMV1100, RHD4ENMSMV2000, RHD4ENMSMV2010, RHD4PRSHLSTAGMV1100 |
| RHD4CZ4L014MV3200 |  | Joints Installation of Medium Voltage Cables 3Cx 500 mm² - (RD-L-14)-Z4-L014-MV | 5d | 2027-01-13 | 2027-01-18 | RHD4CZ4L014MV3100, RHD4PRSHLDOSMV1300, RHD4PRSHLSTAGMV1300 |
| RHD4CZ4L014MV3300 |  | Testing of Medium Voltage Cables 3Cx 500 mm² - (RD-L-14)-Z4-L014-MV | 5d | 2027-01-28 | 2027-02-02 | RHD4CZ4L014MV3200, RHD4CZ4L014MV1200, RHD4CZ4L014MV4200 |
| RHD4CZ4L014MV3400 |  | Termination of Medium Voltage Cables 3Cx 500 mm² - (RD-L-14)-Z4-L014-MV | 2d | 2027-02-03 | 2027-02-04 | RHD4CZ4L014MV3300 |
|  | 2550 | **RHD4-02-002-L014-(MV)-Medium Voltage cables 3Cx 50 mm²** |  | 2027-01-07 | 2027-02-01 |  |
| RHD4CZ4L014MV3101 |  | Installation of Medium Voltage Cables 3Cx 50 mm² - (RD-L-14)-Z4-L014-MV | 2d | 2027-01-07 | 2027-01-09 | RHD4CZ4L014MV1100, RHD4PRSHLDOSMV1200, RHD4ENMSMV2000, RHD4ENMSMV2010, RHD4PRSHLSTAGMV1200 |
| RHD4CZ4L014MV3301 |  | Testing of Medium Voltage Cables 3Cx 50 mm² - (RD-L-14)-Z4-L014-MV | 2d | 2027-01-28 | 2027-01-30 | RHD4CZ4L014MV3101, RHD4CZ4L014MV1200 |
| RHD4CZ4L014MV3401 |  | Termination of Medium Voltage Cables 3Cx 50 mm² - (RD-L-14)-Z4-L014-MV | 2d | 2027-01-31 | 2027-02-01 | RHD4CZ4L014MV3301 |
|  | 2551 | **RHD4-02-002-L014-(MV)-Normally open Point (Outdoor Type)** |  | 2027-01-11 | 2027-01-14 |  |
| RHD4CZ4L014MV4100 |  | Installation for Normally open Point - (RD-L-14)-Z4-L014-MV | 2d | 2027-01-11 | 2027-01-12 | RHD4CZ4L014MV3101 SS, RHD4CZ4L014MV3100 FF, RHD4PRSHLDOSMV1400, RHD4PRSHLSTAGMV1400 |
| RHD4CZ4L014MV4200 |  | Termination for Normally open Point - (RD-L-14)-Z4-L014-MV | 2d | 2027-01-13 | 2027-01-14 | RHD4CZ4L014MV4100 |
|  | 2552 | **RHD4-02-002-L014-(MV)-Unit Substations** |  | 2027-01-28 | 2027-02-11 |  |
| RHD4CZ4L014MV5100 |  | Excavation for Unit Substations for Medium Voltage Network - (RD-L-14)-Z4-L014-MV | 2d | 2027-01-28 | 2027-01-30 | RHD4CZ4L014MV1200, RHD4ENSDZ4APPMV150 |
| RHD4CZ4L014MV5200 |  | Concrete Base Placement for Unit Substations for Medium Voltage Network - (RD-L-14)-Z4-L014-MV | 2d | 2027-01-31 | 2027-02-01 | RHD4CZ4L014MV5100 |
| RHD4CZ4L014MV5300 |  | Installation for Fences and doors for Medium Voltage Network - (RD-L-14)-Z4-L014-MV | 5d | 2027-02-02 | 2027-02-07 | RHD4CZ4L014MV5200 |
| RHD4CZ4L014MV5400 |  | Installation for Unit Substations for Medium Voltage Network - (RD-L-14)-Z4-L014-MV | 4d | 2027-02-08 | 2027-02-11 | RHD4CZ4L014MV5300 |
|  | 2553 | **RHD4-02-002-Z4-L014-Low Voltage Network - LV** |  | 2027-01-11 | 2027-03-14 |  |
|  | 2554 | **RHD4-02-002-L014-(LV)-Low Voltage duct banks** |  | 2027-01-11 | 2027-01-30 |  |
| RHD4CZ4L014LV2100 |  | Excavation of Duct Banks for Low Voltage Network - (RD-L-14)-Z4-L014-LV | 4d | 2027-01-11 | 2027-01-14 | RHD4ENSDZ4APPLV160, RHD4PRSHLDOSLV1000, RHD4PRSHLSTAGLV1000, RHD4CZ4L014MV2100 |
| RHD4CZ4L014LV2200 |  | Installation of Duct Banks for Low Voltage Network - (RD-L-14)-Z4-L014-LV | 6d | 2027-01-16 | 2027-01-21 | RHD4CZ4L014LV2100 |
| RHD4CZ4L014LV2300 |  | Pouring of Duct Banks for Low Voltage Network - (RD-L-14)-Z4-L014-LV | 4d | 2027-01-23 | 2027-01-26 | RHD4CZ4L014LV2200 |
| RHD4CZ4L014LV2400 |  | Backfilling of Duct Banks for Low Voltage Network - (RD-L-14)-Z4-L014-LV | 3d | 2027-01-27 | 2027-01-30 | RHD4CZ4L014LV2300 |
|  | 2555 | **RHD4-02-002-L014-(LV)-Low Voltage Drawpit** |  | 2027-02-16 | 2027-02-20 |  |
| RHD4CZ4L014LV5100 |  | Excavation of Drawpit size 900x900x1000mm for Low Voltage Network - (RD-L-14)-Z4-L014-LV | 2d | 2027-02-16 | 2027-02-17 | RHD4CZ4L014LV2300, RHD4ENSDZ4APPLV160, RHD4CZ4L014LV3100 |
| RHD4CZ4L014LV5200 |  | Installation of Drawpit size 900x900x1000mm for Low Voltage Network - (RD-L-14)-Z4-L014-LV | 2d | 2027-02-18 | 2027-02-20 | RHD4CZ4L014LV5100, RHD4PRSHLDOSLV1400, RHD4PRSHLSTAGLV1400, RHD4CZ4L014SW3500 |
|  | 2556 | **RHD4-02-002-L014-(LV)-Low Voltage cables** |  | 2027-02-06 | 2027-03-14 |  |
| RHD4CZ4L014LV3100 |  | Excavation for Low Voltage Cables for Low Voltage Network - (RD-L-14)-Z4-L014-LV | 9d | 2027-02-06 | 2027-02-15 | RHD4CZ4L014LV2400, RHD4CZ4L014MV1200, RHD4ENSDZ4APPLV160, RHD4CZ4L014MV3401, RHD4CZ4L014MV3400 |
| RHD4CZ4L014LV3200 |  | Cable Laying of Low Voltage Cables for Low Voltage Network - (RD-L-14)-Z4-L014-LV | 7d | 2027-02-16 | 2027-02-24 | RHD4CZ4L014LV3100, RHD4PRSHLDOSLV1100, RHD4ENMSLV2000, RHD4ENMSLV2010, RHD4PRSHLSTAGLV1100 |
| RHD4CZ4L014LV3300 |  | Warning tape and Backfill for Low Voltage Cables for Low Voltage Network - (RD-L-14)-Z4-L014-LV | 7d | 2027-02-25 | 2027-03-04 | RHD4CZ4L014LV3200 |
| RHD4CZ4L014LV3400 |  | Testing of Low Voltage Cables for Low Voltage Network - (RD-L-14)-Z4-L014-LV | 5d | 2027-03-06 | 2027-03-14 | RHD4CZ4L014LV3300 |
|  | 2557 | **RHD4-02-002-L014-(LV)-Low Voltage Distribution Pillars** |  |  |  |  |
|  | 2558 | **RHD4-02-002-L014-(LV)-Low Voltage Distribution Pillars Earthing** |  |  |  |  |
|  | 2559 | **RHD4-02-002-Z4-L014-Street Lighting Network - SL** |  | 2027-01-16 | 2027-05-19 |  |
|  | 2560 | **RHD4-02-002-L014-(SL)-Street Lighting duct banks** |  | 2027-01-16 | 2027-02-06 |  |
| RHD4CZ4L014SL2100 |  | Excavation of Duct Banks for Street Lighting Network - (RD-L-14)-Z4-L014-SL | 3d | 2027-01-16 | 2027-01-18 | RHD4CZ4L014LV2100, RHD4ENSDZ4APPSL170 |
| RHD4CZ4L014SL2200 |  | Installation of Duct Banks for Street Lighting Network - (RD-L-14)-Z4-L014-SL | 4d | 2027-01-23 | 2027-01-26 | RHD4CZ4L014SL2100, RHD4CZ4L014LV2200, RHD4PRSHLDOSSL1000, RHD4PRSHLSTAGSL1000 |

| ID | WBS | Task | Duration | Start | Finish | Predecessors |
| --- | --- | --- | --- | --- | --- | --- |
| RHD4CZ4L014SL2300 |  | Pouring of Duct Banks for Street Lighting Network - (RD-L-14)-Z4-L014-SL | 3d | 2027-01-27 | 2027-01-30 | RHD4CZ4L014SL2200, RHD4CZ4L014LV2300 |
| RHD4CZ4L014SL2400 |  | Backfilling of Duct Banks for Street Lighting Network - (RD-L-14)-Z4-L014-SL | 6d | 2027-01-31 | 2027-02-06 | RHD4CZ4L014SL2300, RHD4CZ4L014LV2400 |
|  | 2561 | **RHD4-02-002-L014-(SL)-Street Lighting Drawpit** |  | 2027-02-18 | 2027-02-23 |  |
| RHD4CZ4L014SL5100 |  | Excavation of Drawpit size 600x600x900mm for Street Lighting Network - (RD-L-14)-Z4-L014-SL | 2d | 2027-02-18 | 2027-02-20 | RHD4CZ4L014SL2300, RHD4ENSDZ4APPSL170, RHD4CZ4L014LV5100 |
| RHD4CZ4L014SL5200 |  | Installation of Drawpit size 600x600x900mm for Street Lighting Network - (RD-L-14)-Z4-L014-SL | 2d | 2027-02-21 | 2027-02-23 | RHD4CZ4L014SL5100, RHD4PRSHLDOSSL1400, RHD4PRSHLSTAGSL1400, RHD4CZ4L014LV5200 |
|  | 2562 | **RHD4-02-002-L014-(SL)-Street Lighting cables** |  | 2027-02-18 | 2027-04-21 |  |
| RHD4CZ4L014SL3100 |  | Excavation for Street Lighting Cables for Street Lighting Network - (RD-L-14)-Z4-L014-SL | 16d | 2027-02-18 | 2027-03-13 | RHD4ENSDZ4APPSL170, RHD4CZ4L014SL5100 SS, RHD4CZ4L014MV2400, RHD4CZ4L014MV5400 |
| RHD4CZ4L014SL3200 |  | Cable Laying of Street Lighting Cables for Street Lighting Network - (RD-L-14)-Z4-L014-SL | 13d | 2027-03-14 | 2027-03-28 | RHD4CZ4L014SL3100, RHD4PRSHLDOSSL1100, RHD4ENMSSL2000, RHD4ENMSSL2010, RHD4PRSHLSTAGSL1100, RHD4CZ4L014LV5200, RHD4CZ4L014SL5200 |
| RHD4CZ4L014SL3300 |  | Warning tape and Backfill for Street Lighting Cables for Street Lighting Network - (RD-L-14)-Z4-L014-SL | 13d | 2027-03-29 | 2027-04-12 | RHD4CZ4L014SL3200 |
| RHD4CZ4L014SL3400 |  | Testing of Street Lighting Cables for Street Lighting Network - (RD-L-14)-Z4-L014-SL | 8d | 2027-04-13 | 2027-04-21 | RHD4CZ4L014SL3300, RHD4CZ4L014LV3400 |
|  | 2563 | **RHD4-02-002-L014-(SL)-Street Lighting Poles** |  | 2027-02-07 | 2027-05-19 |  |
| RHD4CZ4L014SL1100 |  | Excavation for RC Base for Lighting Poles for Street Lighting Network - (RD-L-14)-Z4-L014-SL | 8d | 2027-02-07 | 2027-02-15 | RHD4CZ4L014SL2400, RHD4CZ4L014MV1200, RHD4ENSDZ4APPSL170, RHD4CZ4C031SL1100 |
| RHD4CZ4L014SL1200 |  | Installation for RC Base for Lighting Poles for Street Lighting Network - (RD-L-14)-Z4-L014-SL | 8d | 2027-02-16 | 2027-02-25 | RHD4CZ4L014SL1100 |
| RHD4CZ4L014SL1300 |  | Backfill for RC Base for Lighting Poles for Street Lighting Network - (RD-L-14)-Z4-L014-SL | 8d | 2027-03-07 | 2027-03-18 | RHD4CZ4L014SL1200, RHD4CZ4L014MV4100, RHD4CZ4L014PT4500, RHD4CZ4L09MV4100, RHD4CZ4L014MV4200, RHD4CZ4L01SL1500 |
| RHD4CZ4L014SL1400 |  | Installation for Lighting Poles for Street Lighting Network - (RD-L-14)-Z4-L014-SL | 12d | 2027-04-22 | 2027-05-05 | RHD4CZ4L014SL1300, RHD4CZ4L014SL3400, RHD4PRSHLDOSSL1200, RHD4ENMSSL2000, RHD4ENMSSL2010, RHD4PRSHLSTAGSL1200 |
| RHD4CZ4L014SL1500 |  | Luminaire Installation for Lighting Poles for Street Lighting Network - (RD-L-14)-Z4-L014-SL | 8d | 2027-05-06 | 2027-05-19 | RHD4CZ4L014SL1400, RHD4PRSHLDOSSL1300, RHD4PRSHLSTAGSL1300 |
|  | 2564 | **RHD4-02-002-L014-(SL)-Street Lighting Feeder Pillars** |  | 2027-04-13 | 2027-05-08 |  |
| RHD4CZ4L014SL4100 |  | Leveling for Distribution Pillars for Street Lighting Network - (RD-L-14)-Z4-L014-SL | 2d | 2027-04-13 | 2027-04-14 | RHD4CZ4L014SL3300, RHD4CZ4RA02RD9100 |
| RHD4CZ4L014SL4200 |  | Lean Concrete for Distribution Pillars for Street Lighting Network - (RD-L-14)-Z4-L014-SL | 2d | 2027-04-15 | 2027-04-17 | RHD4CZ4L014SL4100 |
| RHD4CZ4L014SL4300 |  | Installation of Distribution Pillars for Street Lighting Network - (RD-L-14)-Z4-L014-SL | 2d | 2027-05-06 | 2027-05-08 | RHD4CZ4L014SL4200, RHD4CZ4L014SL1400 |
|  | 2565 | **RHD4-02-002-L014-(SL)-Street Lighting Earthing System** |  | 2027-05-09 | 2027-05-10 |  |
| RHD4CZ4L014SL6100 |  | Installation of Earthing for Lighting Poles and Fedder Pillers for Street Lighting Network - (RD-L-14)-Z4-L014-SL | 2d | 2027-05-09 | 2027-05-10 | RHD4CZ4L014SL4300, RHD4ENMSER2000, RHD4ENMSER2010, RHD4CZ4A013MV3401, RHD4CZ5L08MV2400, RHD4CZ5L08MV3401, RHD4CZ5L08MV4200 |
|  | 2571 | **RHD4-02-002-Z4-L014-Telecommunications Network - TC** |  | 2026-08-12 | 2027-06-09 |  |
|  | 2572 | **RHD4-02-002-L014-(TC)-Telecommunications Ducts** |  | 2027-04-13 | 2027-06-09 |  |
| RHD4CZ4L014TC2100 |  | Excavation of HDPE Ducts for Telecom Network - (RD-L-14)-Z4-L014-TC | 12d | 2027-04-13 | 2027-04-26 | RHD4CZ4L014TC3400, RHD4CZ4L014SL3300, RHD4ENSDZ4APPTC190, RHD4CZ4L014LV3300 |
| RHD4CZ4L014TC2200 |  | Installation of HDPE Ducts for Telecom Network - (RD-L-14)-Z4-L014-TC | 12d | 2027-04-27 | 2027-05-10 | RHD4CZ4L014TC2100, RHD4PRSHLDOSTC1000, RHD4PRSHLSTAGTC1000 |
| RHD4CZ4L014TC2400 |  | Backfilling of HDPE Ducts for Telecom Network - (RD-L-14)-Z4-L014-TC | 12d | 2027-05-27 | 2027-06-09 | RHD4CZ4L014TC2200, RHD4CZ4L014TC5200 |
|  | 2573 | **RHD4-02-002-L014-(TC)-Telecommunications Manholes** |  | 2027-04-27 | 2027-05-26 |  |
| RHD4CZ4L014TC5100 |  | Excavation for Manholes for Telecom Network - (RD-L-14)-Z4-L014-TC | 11d | 2027-04-27 | 2027-05-09 | RHD4CZ4L014TC2100, RHD4ENSDZ4APPTC190, RHD4CZ4L01RD8100 |
| RHD4CZ4L014TC5200 |  | Installation of Manholes for Telecom Network - (RD-L-14)-Z4-L014-TC | 11d | 2027-05-10 | 2027-05-26 | RHD4CZ4L014TC5100, RHD4CZ4L014TC2200 SS, RHD4PRSHLDOSTC1200, RHD4PRSHLSTAGTC1200 |
|  | 2574 | **RHD4-02-002-L014-(TC)-Telecomminications Road Crossings** |  | 2026-08-12 | 2026-08-20 |  |
| RHD4CZ4L014TC3100 |  | Excavation for Road Crossings for Telecom Network - (RD-L-14)-Z4-L014-TC | 2d | 2026-08-12 | 2026-08-13 | RHD4ENSDZ4APPTC190, RHD4CZ4L014ST1110 |
| RHD4CZ4L014TC3200 |  | Installation of Road Crossings for Telecom Network - (RD-L-14)-Z4-L014-TC | 2d | 2026-08-15 | 2026-08-16 | RHD4CZ4L014TC3100, RHD4PRSHLDOSTC1100, RHD4PRSHLSTAGTC1100 |
| RHD4CZ4L014TC3300 |  | Pouring of Road Crossings for Telecom Network - (RD-L-14)-Z4-L014-TC | 2d | 2026-08-17 | 2026-08-18 | RHD4CZ4L014TC3200 |
| RHD4CZ4L014TC3400 |  | Backfilling of Road Crossings for Telecom Network - (RD-L-14)-Z4-L014-TC | 2d | 2026-08-19 | 2026-08-20 | RHD4CZ4L014TC3300 |
|  | 2575 | **RHD4-02-002-Z4-L014-Information and Communication Technologies - ICT** |  | 2026-08-12 | 2027-06-12 |  |
|  | 2576 | **RHD4-02-002-L014-(ICT)-Information and Communication Technologies Ducts** |  | 2027-04-13 | 2027-06-12 |  |
| RHD4CZ4L014ICT2100 |  | Excavation of HDPE Ducts for ICT Network - (RD-L-14)-Z4-L014-ICT | 12d | 2027-04-13 | 2027-04-26 | RHD4CZ4L014ICT3400, RHD4CZ4L014SL3300, RHD4ENSDZ4APPICT200 |
| RHD4CZ4L014ICT2200 |  | Installation of HDPE Ducts for ICT Network - (RD-L-14)-Z4-L014-ICT | 12d | 2027-04-27 | 2027-05-10 | RHD4CZ4L014ICT2100, RHD4PRSHLDOSICT1000, RHD4PRSHLSTAGICT1000 |
| RHD4CZ4L014ICT2400 |  | Backfilling of HDPE Ducts for ICT Network - (RD-L-14)-Z4-L014-ICT | 12d | 2027-05-30 | 2027-06-12 | RHD4CZ4L014ICT2200, RHD4CZ4L014ICT5200 |
|  | 2577 | **RHD4-02-002-L014-(ICT)-Information and Communication Technologies Manholes** |  | 2027-04-27 | 2027-05-29 |  |
| RHD4CZ4L014ICT5100 |  | Excavation for Manholes for ICT Network - (RD-L-14)-Z4-L014-ICT | 12d | 2027-04-27 | 2027-05-10 | RHD4CZ4L014ICT2100, RHD4ENSDZ4APPICT200 |
| RHD4CZ4L014ICT5200 |  | Installation of Manholes for ICT Network - (RD-L-14)-Z4-L014-ICT | 12d | 2027-05-11 | 2027-05-29 | RHD4CZ4L014ICT5100, RHD4PRSHLDOSICT1200, RHD4PRSHLSTAGICT1200 |
|  | 2578 | **RHD4-02-002-L014-(ICT)-Information and Communication Technologies Road Crossings** |  | 2026-08-12 | 2026-08-23 |  |
| RHD4CZ4L014ICT3100 |  | Excavation for Road Crossings for ICT Network - (RD-L-14)-Z4-L014-ICT | 2d | 2026-08-12 | 2026-08-13 | RHD4ENSDZ4APPICT200, RHD4CZ4L014ST1110 |
| RHD4CZ4L014ICT3200 |  | Installation of Road Crossings for ICT Network - (RD-L-14)-Z4-L014-ICT | 2d | 2026-08-17 | 2026-08-18 | RHD4CZ4L014ICT3100, RHD4PRSHLDOSICT1100, RHD4PRSHLSTAGICT1100 |
| RHD4CZ4L014ICT3300 |  | Pouring of Road Crossings for ICT Network - (RD-L-14)-Z4-L014-ICT | 2d | 2026-08-19 | 2026-08-20 | RHD4CZ4L014ICT3200 |
| RHD4CZ4L014ICT3400 |  | Backfilling of Road Crossings for ICT Network - (RD-L-14)-Z4-L014-ICT | 2d | 2026-08-22 | 2026-08-23 | RHD4CZ4L014ICT3300 |
|  | 2566 | **RHD4-02-002-Z4-L014-Landscape Network - LS** |  |  |  |  |
|  | 2567 | **RHD4-02-002-L014-(LS)-Landscape Lighting cables** |  |  |  |  |
|  | 2568 | **RHD4-02-002-L014-(LS)-Landscape Feeder Pillars** |  |  |  |  |
|  | 2569 | **RHD4-02-002-L014-(LS)-Landscape Bollard Poles** |  |  |  |  |
|  | 2570 | **RHD4-02-002-L014-(LS)-Landscape Feeder Pillars Earthing** |  |  |  |  |
|  | 2579 | **RHD4-02-002-Z4-L014-Security Network - CCTV** |  | 2027-06-13 | 2027-07-26 |  |
|  | 2580 | **RHD4-02-002-L014-(CCTV)-Civil Works** |  | 2027-06-13 | 2027-06-23 |  |
| RHD4CZ4L014CCTV2100 |  | Civil Works for Security Network - (RD-L-14)-Z4-L014-CCTV | 10d | 2027-06-13 | 2027-06-23 | RHD4CZ4L014ICT2400, RHD4CZ4L014TC2400 |
|  | 2581 | **RHD4-02-002-L014-(CCTV)-CCTV Poles** |  | 2027-06-24 | 2027-07-05 |  |
| RHD4CZ4L014CCTV1100 |  | Excavation for RC Base for CCTV Poles for Security Network - (RD-L-14)-Z4-L014-CCTV | 2d | 2027-06-24 | 2027-06-26 | RHD4CZ4L014CCTV2100, RHD4ENSDZ4APPCCTV210 |
| RHD4CZ4L014CCTV1200 |  | Installation for RC Base for CCTV Poles for Security Network - (RD-L-14)-Z4-L014-CCTV | 2d | 2027-06-27 | 2027-06-28 | RHD4CZ4L014CCTV1100 |
| RHD4CZ4L014CCTV1300 |  | Backfill for RC Base for CCTV Poles for Security Network - (RD-L-14)-Z4-L014-CCTV | 2d | 2027-06-29 | 2027-06-30 | RHD4CZ4L014CCTV1200 |
| RHD4CZ4L014CCTV1400 |  | Installation for CCTV Poles for Security Network - (RD-L-14)-Z4-L014-CCTV | 2d | 2027-07-01 | 2027-07-03 | RHD4CZ4L014CCTV1300, RHD4PRSHLDOSCCTV1000, RHD4PRSHLSTACCTV1000, RHD4CZ5L08RD4100 |
| RHD4CZ4L014CCTV1500 |  | Protection post Installation for CCTV Poles for Security Network - (RD-L-14)-Z4-L014-CCTV | 2d | 2027-07-04 | 2027-07-05 | RHD4CZ4L014CCTV1400 |
|  | 2582 | **RHD4-02-002-L014-(CCTV)-Camera** |  | 2027-07-06 | 2027-07-07 |  |
| RHD4CZ4L014CCTV3100 |  | Installation for Cameras for Security Network - (RD-L-14)-Z4-L014-CCTV | 2d | 2027-07-06 | 2027-07-07 | RHD4CZ4L014CCTV1400, RHD4CZ4L014CCTV4100, RHD4PRSHLDOSCCTV1100, RHD4PRSHLSTACCTV1100 |
|  | 2583 | **RHD4-02-002-L014-(CCTV)-Power and Infrastructure** |  | 2027-07-04 | 2027-07-07 |  |
| RHD4CZ4L014CCTV4100 |  | Installation of Power outlet, UPS and midspan for PTZ Camerafor Cameras for Security Network - (RD-L-14)-Z4-L014-CCTV | 2d | 2027-07-04 | 2027-07-05 | RHD4CZ4L014CCTV1400, RHD4PRSHLDOSCCTV1300, RHD4PRSHLSTACCTV1300 |
| RHD4CZ4L014CCTV4200 |  | Short Range Wireless PoP wireless Bridgefor CCTV Poles for Security Network - (RD-L-12/2)-Z3-L122-CCTV | 2d | 2027-07-06 | 2027-07-07 | RHD4CZ4L014CCTV4100 |
|  | 2585 | **RHD4-02-002-L014-(CCTV)-CCTV Panels and Components** |  | 2027-07-08 | 2027-07-26 |  |
| RHD4CZ4L014CCTV6100 |  | Installation for CCTV Panels for Security Network - (RD-L-14)-Z4-L014-CCTV | 16d | 2027-07-08 | 2027-07-26 | RHD4CZ4L014CCTV3100, RHD4PRSHLDOSCCTV1200, RHD4PRSHLSTACCTV1200, RHD4PRLOLSTACCTV1001, RHD4CZ4L014CCTV4200 |
|  | 2596 | **RHD4-02-002-Z4-L09** |  | 2026-08-16 | 2027-06-02 |  |

| ID | WBS | Task | Duration | Start | Finish | Predecessors |
| --- | --- | --- | --- | --- | --- | --- |
|  | 2627 | **RHD4-02-002-Z4-L09-Crossings Sewage Network - SWCr** |  |  |  |  |
|  | 2637 | **RHD4-02-002-L09-(SWCr)-MH Works - 1200 mm diameter** |  |  |  |  |
|  | 2630 | **RHD4-02-002-L09-(SWCr)-GRP Pipes - 500 mm diameter** |  |  |  |  |
|  | 2633 | **RHD4-02-002-L09-(SWCr)-UPVC Pipes - 200 mm diameter** |  |  |  |  |
|  | 2647 | **RHD4-02-002-L09-(SWCr)-Discharge Chambers** |  |  |  |  |
|  | 2671 | **RHD4-02-002-Z4-L09-Crossings Potable Network - PTCr** |  |  |  |  |
|  | 2675 | **RHD4-02-002-L09-(PTCr)-HDPE Pipes - 400 mm diameter** |  |  |  |  |
|  | 2673 | **RHD4-02-002-L09-(PTCr)-HDPE Pipes - 160 mm diameter** |  |  |  |  |
|  | 2672 | **RHD4-02-002-L09-(PTCr)-HDPE Pipes - 110 mm diameter** |  |  |  |  |
|  | 2677 | **RHD4-02-002-L09-(PTCr)-Gate Valves (Direct Buried)** |  |  |  |  |
|  | 2678 | **RHD4-02-002-L09-(PTCr)-Butterfly Valve Chamber** |  |  |  |  |
|  | 2679 | **RHD4-02-002-L09-(PTCr)-Butterfly Valves** |  |  |  |  |
|  | 2775 | **RHD4-02-002-Z4-L09-Road Works - RD** |  | 2026-08-27 | 2027-06-02 |  |
|  | 2776 | **RHD4-02-002-L09-(RD)-Subgrade** |  | 2026-08-27 | 2026-09-01 |  |
| RHD4CZ4L09RD1100 |  | Supply, lay and compaction subgrade compacted thickness 300 mm for Roads - (RD-L-9)-Z4-L09-RD | 5d | 2026-08-27 | 2026-09-01 | RHD4CZ4L09RW4000, RHD4ENSDZ4APPEW100, RHD4ENSDZ4APPRD220, RHD4CZ4L09ST3302, RHD4CZ4L09ICT3400, RHD4CZ4L09TC3400 |
|  | 2777 | **RHD4-02-002-L09-(RD)-Aggregate Base Course** |  | 2026-09-02 | 2026-09-07 |  |
| RHD4CZ4L09RD2100 |  | Supply, lay and compaction Aggregate base course compacted thickness 300 mmfor Roads - (RD-L-9)-Z4-L09-RD | 5d | 2026-09-02 | 2026-09-07 | RHD4CZ4L09RD1100, RHD4PRSHLDOSRD1000, RHD4PRSHLSTAGRD1000 |
|  | 2778 | **RHD4-02-002-L09-(RD)-Bituminous base course Two Layers, including (MC1)&(RC2)** |  | 2026-09-19 | 2027-04-15 |  |
| RHD4CZ4L09RD3100 |  | Supply, lay and Asphaltic base course including Prime Coat (MC1) for 1st Layer - (RD-L-9)-Z4-L09-RD | 2d | 2026-09-19 | 2026-09-20 | RHD4CZ4L09RD2100, RHD4PRSHLDOSRD1100, RHD4ENMSASPH2000, RHD4ENMSASPH2010, RHD4PRSHLSTAGRD1100, RHD4CZ4L01RD3100 |
| RHD4CZ4L09RD3200 |  | Supply, lay and Asphaltic base course including Tack Coat (RC2) for 2nd Layer - (RD-L-9)-Z4-L09-RD | 2d | 2027-04-14 | 2027-04-15 | RHD4CZ4L09RD3100, RHD4PRSHLDOSRD1100, RHD4PRSHLSTAGRD1100, RHD4CZ4L09ICT2400 |
|  | 2780 | **RHD4-02-002-L09-(RD)-Precast Concrete Curb** |  | 2027-04-17 | 2027-04-28 |  |
| RHD4CZ4L09RD5100 |  | Supply and installation Precast Concrete Kerb for Roads - (RD-L-9)-Z4-L09-RD | 11d | 2027-04-17 | 2027-04-28 | RHD4PRSHLDOSRD1200, RHD4ENMSRD2000, RHD4ENMSRD2010, RHD4PRSHLSTAGRD1200, RHD4CZ4L09RD3200 |
|  | 2783 | **RHD4-02-002-L09-(RD)-Traffic Signage** |  | 2027-04-29 | 2027-05-02 |  |
| RHD4CZ4L09RD8100 |  | Installation of Traffic Signage for Road Network - (RD-L-9)-Z4-L09-RD | 3d | 2027-04-29 | 2027-05-02 | RHD4CZ4L09RD5100, RHD4PRSHLDOSRD1600, RHD4PRSHLSTAGRD1600 |
|  | 2781 | **RHD4-02-002-L09-(RD)-Precast Interlocking Block Pavers** |  | 2027-05-03 | 2027-05-26 |  |
| RHD4CZ4L09RD6100 |  | Interlocking block pavers for sidewalk-footpath for Side walks and Parking areas - (RD-L-9)-Z4-L09-RD | 17d | 2027-05-03 | 2027-05-26 | RHD4CZ4L09RD8100, RHD4PRSHLDOSRD1300, RHD4PRSHLDOSRD1400, RHD4ENMSRD2000, RHD4ENMSRD2010, RHD4PRSHLSTAGRD1300, RHD4PRSHLSTAGRD1400 |
|  | 2779 | **RHD4-02-002-L09-(RD)-Bituminous concrete wearing course including tack coat (RC2)** |  | 2027-05-27 | 2027-05-29 |  |
| RHD4CZ4L09RD4100 |  | Supply, lay and compaction Asphaltic wearing course including tack Coat (RC2)for Road Network - (RD-L-9)-Z4-L09-RD | 2d | 2027-05-27 | 2027-05-29 | RHD4CZ4L09RD5100, RHD4CZ4L09RD6100 |
|  | 2782 | **RHD4-02-002-L09-(RD)-Pavement Marking** |  | 2027-05-30 | 2027-06-02 |  |
| RHD4CZ4L09RD7100 |  | Pavement Markings for Road Network - (RD-L-9)-Z4-L09-RD | 4d | 2027-05-30 | 2027-06-02 | RHD4CZ4L09RD4100, RHD4PRSHLDOSRD1500, RHD4PRSHLSTAGRD1500 |
|  | 2600 | **RHD4-02-002-Z4-L09-Storm Network - ST** |  | 2026-08-16 | 2026-12-06 |  |
|  | 8104 | **RHD4-02-002-L09-(ST)-MH Works - 2000 mm diameter** |  | 2026-08-16 | 2026-08-26 |  |
| RHD4CZ4L09ST3102 |  | Excavation and PC Blinding works for MH 2000 mm - (RD-L-9)-Z4-L09-ST | 2d | 2026-08-16 | 2026-08-17 | RHD4CZ4L09RW4000, RHD4CZ4C031ST3102 |
| RHD4CZ4L09ST3202 |  | Installation of Base for MH 2000 mm - (RD-L-9)-Z4-L09-ST | 2d | 2026-08-18 | 2026-08-19 | RHD4CZ4L09ST3102 |
| RHD4CZ4L09ST3302 |  | MH Ring and C.Slab works and Backfilling works for MH 2000 mm - (RD-L-9)-Z4-L09-ST | 2d | 2026-08-20 | 2026-08-22 | RHD4CZ4L09ST3202 |
| RHD4CZ4L09ST3402 |  | Steel Cover for MH 2000 mm - (RD-L-9)-Z4-L09-ST | 2d | 2026-08-23 | 2026-08-24 | RHD4CZ4L09ST3302 |
| RHD4CZ4L09ST3502 |  | Finishing, Benching, Testing works for MH 2000 mm - (RD-L-9)-Z4-L09-ST | 2d | 2026-08-25 | 2026-08-26 | RHD4CZ4L09ST3402 |
|  | 8092 | **RHD4-02-002-L09-(ST)-GRP Pipes - 1000 mm diameter** |  | 2026-10-11 | 2026-10-21 |  |
| RHD4CZ4L09ST1106 |  | Excavation works for GRP Pipe Line 1000 mm - (RD-L-9)-Z4-L09-ST | 2d | 2026-10-11 | 2026-10-12 | RHD4CZ4L014ST3102, RHD4CZ4L09ST3102 |
| RHD4CZ4L09ST1206 |  | Bedding works for GRP Pipe Line 1000 mm - (RD-L-9)-Z4-L09-ST | 2d | 2026-10-13 | 2026-10-14 | RHD4CZ4L09ST1106 |
| RHD4CZ4L09ST1306 |  | Installing for GRP Pipe Line 1000 mm - (RD-L-9)-Z4-L09-ST | 2d | 2026-10-15 | 2026-10-17 | RHD4CZ4L09ST1206 |
| RHD4CZ4L09ST1406 |  | Primary Test for GRP Pipe Line 1000 mm - (RD-L-9)-Z4-L09-ST | 2d | 2026-10-18 | 2026-10-19 | RHD4CZ4L09ST1306 |
| RHD4CZ4L09ST1506 |  | Backfilling and warning tape works for GRP Pipe Line 1000 mm - (RD-L-9)-Z4-L09-ST | 2d | 2026-10-20 | 2026-10-21 | RHD4CZ4L09ST3502, RHD4CZ4L09ST1406 |
|  | 2413 | **RHD4-02-002-L09-(ST)-GRP Pipes - 500 mm diameter** |  | 2026-10-13 | 2026-10-24 |  |
| RHD4CZ4L09ST1101 |  | Excavation works for GRP Pipe Line 500 mm - (RD-L-9)-Z4-L09-ST | 2d | 2026-10-13 | 2026-10-14 | RHD4CZ4L09ST1106, RHD4CZ4L09ST3102 |
| RHD4CZ4L09ST1201 |  | Bedding works for GRP Pipe Line 500 mm - (RD-L-9)-Z4-L09-ST | 2d | 2026-10-15 | 2026-10-17 | RHD4CZ4L09ST1101 |
| RHD4CZ4L09ST1301 |  | Installing for GRP Pipe Line 500 mm - (RD-L-9)-Z4-L09-ST | 2d | 2026-10-18 | 2026-10-19 | RHD4CZ4L09ST1201 |
| RHD4CZ4L09ST1401 |  | Primary Test for GRP Pipe Line 500 mm - (RD-L-9)-Z4-L09-ST | 2d | 2026-10-20 | 2026-10-21 | RHD4CZ4L09ST1301 |
| RHD4CZ4L09ST1501 |  | Backfilling and warning tape works for GRP Pipe Line 500 mm - (RD-L-9)-Z4-L09-ST | 2d | 2026-10-22 | 2026-10-24 | RHD4CZ4L09ST3502, RHD4CZ4L09ST1401 |
|  | 2617 | **RHD4-02-002-L09-(ST)-MH Works - 1200 mm diameter** |  | 2026-10-25 | 2026-11-04 |  |
| RHD4CZ4L09ST3100 |  | Excavation and PC Blinding works for MH 1200 mm - (RD-L-9)-Z4-L09-ST | 2d | 2026-10-25 | 2026-10-26 | RHD4ENSDZ4APPST110, RHD4ENMSST2000, RHD4CZ4L09ST1501, RHD4ENMSST2010, RHD4PRSHLSTAGSW1306, RHD4PRSHLSTAPTCr1000, RHD4CZ4L014ST3300, RHD4CZ4L09ST3102 SS |
| RHD4CZ4L09ST3200 |  | Installation of Base for MH 1200 mm - (RD-L-9)-Z4-L09-ST | 2d | 2026-10-27 | 2026-10-28 | RHD4CZ4L09ST3100, RHD4PRSHLSTAGST1603 |
| RHD4CZ4L09ST3300 |  | MH Ring and C.Slab works and Backfilling works for MH 1200 mm - (RD-L-9)-Z4-L09-ST | 2d | 2026-10-29 | 2026-10-31 | RHD4CZ4L09ST3200, RHD4PRSHLDOSST1603 |
| RHD4CZ4L09ST3400 |  | Steel Cover for MH 1200 mm - (RD-L-9)-Z4-L09-ST | 2d | 2026-11-01 | 2026-11-02 | RHD4CZ4L09ST3300, RHD4PRSHLDOSST1703, RHD4PRSHLSTAGST1703 |
| RHD4CZ4L09ST3500 |  | Finishing, Benching, Testing works for MH 1200 mm - (RD-L-9)-Z4-L09-ST | 2d | 2026-11-03 | 2026-11-04 | RHD4CZ4L09ST3400 |
|  | 2618 | **RHD4-02-002-L09-(ST)-MH Works - 1500 mm diameter** |  | 2026-10-25 | 2026-12-06 |  |
| RHD4CZ4L09ST3101 |  | Excavation and PC Blinding works for MH 1500 mm - (RD-L-9)-Z4-L09-ST | 9d | 2026-10-25 | 2026-11-03 | RHD4CZ4L09ST3100 SS, RHD4ENSDZ4APPST110, RHD4ENMSST2000 |
| RHD4CZ4L09ST3201 |  | Installation of Base for MH 1500 mm - (RD-L-9)-Z4-L09-ST | 9d | 2026-11-04 | 2026-11-14 | RHD4CZ4L09ST3101, RHD4CZ4L09ST3200, RHD4CZ4L09ST3100, RHD4PRSHLSTAGST1603 |
| RHD4CZ4L09ST3301 |  | MH Ring and C.Slab works and Backfilling works for MH 1500 mm - (RD-L-9)-Z4-L09-ST | 9d | 2026-11-15 | 2026-11-24 | RHD4CZ4L09ST3201, RHD4CZ4L09ST3300 SS, RHD4CZ4L09ST3101, RHD4PRSHLDOSST1603 |
| RHD4CZ4L09ST3401 |  | Steel Cover for MH 1500 mm - (RD-L-9)-Z4-L09-ST | 6d | 2026-11-25 | 2026-12-01 | RHD4CZ4L09ST3301, RHD4CZ4L09ST3400 SS, RHD4CZ4L09ST3400, RHD4PRSHLDOSST1703, RHD4PRSHLSTAGST1703 |
| RHD4CZ4L09ST3501 |  | Finishing, Benching, Testing works for MH 1500 mm - (RD-L-9)-Z4-L09-ST | 4d | 2026-12-02 | 2026-12-06 | RHD4CZ4L09ST3401, RHD4CZ4L09ST3500 SS |
|  | 2606 | **RHD4-02-002-L09-(ST)-GRP Pipes - 900 mm diameter** |  | 2026-10-29 | 2026-11-09 |  |
| RHD4CZ4L09ST1105 |  | Excavation works for GRP Pipe Line 900 mm - (RD-L-9)-Z4-L09-ST | 2d | 2026-10-29 | 2026-10-31 | RHD4CZ4L09ST3200, RHD4ENSDZ4APPST110 |
| RHD4CZ4L09ST1205 |  | Bedding works for GRP Pipe Line 900 mm - (RD-L-9)-Z4-L09-ST | 2d | 2026-11-01 | 2026-11-02 | RHD4CZ4L09ST1105 |
| RHD4CZ4L09ST1305 |  | Installing for GRP Pipe Line 900 mm - (RD-L-9)-Z4-L09-ST | 2d | 2026-11-03 | 2026-11-04 | RHD4CZ4L09ST1205, RHD4PRSHLSTAGST1003, RHD4PRSHLDOSST1603, RHD4PRSHLPOST1000, RHD4PRSHLDOSST1003 |
| RHD4CZ4L09ST1405 |  | Primary Test for GRP Pipe Line 900 mm - (RD-L-9)-Z4-L09-ST | 2d | 2026-11-05 | 2026-11-07 | RHD4CZ4L09ST1305 |
| RHD4CZ4L09ST1505 |  | Backfilling and warning tape works for GRP Pipe Line 900 mm - (RD-L-9)-Z4-L09-ST | 2d | 2026-11-08 | 2026-11-09 | RHD4CZ4L09ST1405 |
|  | 2605 | **RHD4-02-002-L09-(ST)-GRP Pipes - 800 mm diameter** |  | 2026-11-01 | 2026-11-11 |  |
| RHD4CZ4L09ST1104 |  | Excavation works for GRP Pipe Line 800 mm - (RD-L-9)-Z4-L09-ST | 2d | 2026-11-01 | 2026-11-02 | RHD4CZ4L09ST1105, RHD4ENSDZ4APPST110 |
| RHD4CZ4L09ST1204 |  | Bedding works for GRP Pipe Line 800 mm - (RD-L-9)-Z4-L09-ST | 2d | 2026-11-03 | 2026-11-04 | RHD4CZ4L09ST1104, RHD4CZ4L09ST1205 |

| ID | WBS | Task | Duration | Start | Finish | Predecessors |
| --- | --- | --- | --- | --- | --- | --- |
| RHD4CZ4L09ST1304 |  | Installing for GRP Pipe Line 800 mm - (RD-L-9)-Z4-L09-ST | 2d | 2026-11-05 | 2026-11-07 | RHD4CZ4L09ST1204, RHD4CZ4L09ST1305, RHD4PRSHLSTAGST1003, RHD4PRSHLDOSST1603, RHD4PRSHLPOST1000, RHD4PRSHLDOSST1003 |
| RHD4CZ4L09ST1404 |  | Primary Test for GRP Pipe Line 800 mm - (RD-L-9)-Z4-L09-ST | 2d | 2026-11-08 | 2026-11-09 | RHD4CZ4L09ST1304, RHD4CZ4L09ST1405 |
| RHD4CZ4L09ST1504 |  | Backfilling and warning tape works for GRP Pipe Line 800 mm - (RD-L-9)-Z4-L09-ST | 2d | 2026-11-10 | 2026-11-11 | RHD4CZ4L09ST1404, RHD4CZ4L09ST1505 |
|  | 2604 | **RHD4-02-002-L09-(ST)-GRP Pipes - 700 mm diameter** |  | 2026-10-29 | 2026-11-14 |  |
| RHD4CZ4L09ST1103 |  | Excavation works for GRP Pipe Line 700 mm - (RD-L-9)-Z4-L09-ST | 2d | 2026-10-29 | 2026-10-31 | RHD4ENSDZ4APPST110, RHD4CZ4L09ST3200 |
| RHD4CZ4L09ST1203 |  | Bedding works for GRP Pipe Line 700 mm - (RD-L-9)-Z4-L09-ST | 2d | 2026-11-05 | 2026-11-07 | RHD4CZ4L09ST1103, RHD4CZ4L09ST1204 |
| RHD4CZ4L09ST1303 |  | Installing for GRP Pipe Line 700 mm - (RD-L-9)-Z4-L09-ST | 2d | 2026-11-08 | 2026-11-09 | RHD4CZ4L09ST1203, RHD4CZ4L09ST1304, RHD4PRSHLSTAGST1003, RHD4PRSHLDOSST1603, RHD4PRSHLPOST1000, RHD4PRSHLDOSST1003 |
| RHD4CZ4L09ST1403 |  | Primary Test for GRP Pipe Line 700 mm - (RD-L-9)-Z4-L09-ST | 2d | 2026-11-10 | 2026-11-11 | RHD4CZ4L09ST1303, RHD4CZ4L09ST1404 |
| RHD4CZ4L09ST1503 |  | Backfilling and warning tape works for GRP Pipe Line 700 mm - (RD-L-9)-Z4-L09-ST | 2d | 2026-11-12 | 2026-11-14 | RHD4CZ4L09ST1403, RHD4CZ4L09ST1504 |
|  | 2603 | **RHD4-02-002-L09-(ST)-GRP Pipes - 600 mm diameter** |  | 2026-10-27 | 2026-11-16 |  |
| RHD4CZ4L09ST1102 |  | Excavation works for GRP Pipe Line 600 mm - (RD-L-9)-Z4-L09-ST | 2d | 2026-10-27 | 2026-10-28 | RHD4ENSDZ4APPST110, RHD4CZ4L09ST3100, RHD4CZ4L09ST3102 |
| RHD4CZ4L09ST1202 |  | Bedding works for GRP Pipe Line 600 mm - (RD-L-9)-Z4-L09-ST | 2d | 2026-10-29 | 2026-10-31 | RHD4CZ4L09ST1102 |
| RHD4CZ4L09ST1302 |  | Installing for GRP Pipe Line 600 mm - (RD-L-9)-Z4-L09-ST | 2d | 2026-11-01 | 2026-11-02 | RHD4CZ4L09ST1202, RHD4PRSHLSTAGST1003, RHD4PRSHLDOSST1603, RHD4PRSHLPOST1000, RHD4PRSHLDOSST1003 |
| RHD4CZ4L09ST1402 |  | Primary Test for GRP Pipe Line 600 mm - (RD-L-9)-Z4-L09-ST | 2d | 2026-11-12 | 2026-11-14 | RHD4CZ4L09ST1302, RHD4CZ4L09ST1403 |
| RHD4CZ4L09ST1502 |  | Backfilling and warning tape works for GRP Pipe Line 600 mm - (RD-L-9)-Z4-L09-ST | 2d | 2026-11-15 | 2026-11-16 | RHD4CZ4L09ST1402, RHD4CZ4L09ST1503, RHD4CZ4L09ST1506 |
|  | 2601 | **RHD4-02-002-L09-(ST)-GRP Pipes - 400 mm diameter** |  |  |  |  |
|  | 2615 | **RHD4-02-002-L09-(ST)-UPVC Pipes - 300 mm diameter** |  | 2026-10-27 | 2026-12-02 |  |
| RHD4CZ4L09ST2100 |  | Excavation works for UPVC Pipe Line 300 mm - (RD-L-9)-Z4-L09-ST | 4d | 2026-10-27 | 2026-10-31 | RHD4ENSDZ4APPST110, RHD4CZ4L09ST3100, RHD4CZ4L09ST3102 |
| RHD4CZ4L09ST2200 |  | Bedding works for UPVC Pipe Line 300 mm - (RD-L-9)-Z4-L09-ST | 3d | 2026-11-01 | 2026-11-03 | RHD4CZ4L09ST2100 |
| RHD4CZ4L09ST2300 |  | Installing for UPVC Pipe Line 300 mm - (RD-L-9)-Z4-L09-ST | 4d | 2026-11-04 | 2026-11-08 | RHD4CZ4L09ST2200, RHD4PRSHLDOSST1103, RHD4PRSHLSTAGST1103 |
| RHD4CZ4L09ST2400 |  | Primary Test for UPVC Pipe Line 300 mm - (RD-L-9)-Z4-L09-ST | 3d | 2026-11-09 | 2026-11-11 | RHD4CZ4L09ST2300 |
| RHD4CZ4L09ST2500 |  | Backfilling and warning tape works for UPVC Pipe Line 300 mm - (RD-L-9)-Z4-L09-ST | 4d | 2026-11-29 | 2026-12-02 | RHD4CZ4L09ST2400, RHD4CZ4L09ST6100, RHD4CZ4L09ST1501, RHD4CZ4L09SW3501 |
|  | 2623 | **RHD4-02-002-L09-(ST)-Concrete Encasement** |  | 2026-11-07 | 2026-11-08 |  |
| RHD4CZ4L09ST6100 |  | Pipe Encasement for Storm Pipelines - (RD-L-9)-Z4-L09-ST | 2d | 2026-11-07 | 2026-11-08 | RHD4CZ4L09ST2300 SS, RHD4CZ4L09ST2300 FF, RHD4CZ4L09ST2200 |
|  | 2624 | **RHD4-02-002-Z4-L09-Catch Basin - ST** |  | 2026-11-01 | 2026-12-05 |  |
|  | 2625 | **RHD4-02-002-L09-(ST)-Single Catch Basin Works** |  | 2026-11-01 | 2026-12-05 |  |
| RHD4CZ4L09ST7100 |  | Excavation works for Single Catch Basin - (RD-L-9)-Z4-L09-ST | 5d | 2026-11-01 | 2026-11-05 | RHD4CZ4L09ST3300, RHD4ENSDZ4APPST110 |
| RHD4CZ4L09ST7200 |  | PC Blinding, Installation and Pipe connection for Single Catch Basin - (RD-L-9)-Z4-L09-ST | 5d | 2026-11-07 | 2026-11-11 | RHD4CZ4L09ST7100 |
| RHD4CZ4L09ST7300 |  | Rings & C.Slab & Final Backfill for Single Catch Basin - (RD-L-9)-Z4-L09-ST | 6d | 2026-11-12 | 2026-11-18 | RHD4CZ4L09ST7200, RHD4PRSHLDOSST1303, RHD4PRSHLSTAGST1303 |
| RHD4CZ4L09ST7400 |  | Steel Cover for Single Catch Basin - (RD-L-9)-Z4-L09-ST | 5d | 2026-11-19 | 2026-11-24 | RHD4CZ4L09ST7300, RHD4PRSHLDOSST1703 |
| RHD4CZ4L09ST7500 |  | Finishing and Insulation works for Single Catch Basin - (RD-L-9)-Z4-L09-ST | 9d | 2026-11-25 | 2026-12-05 | RHD4CZ4L09ST7400 |
|  | 2649 | **RHD4-02-002-Z4-L09-Sewage Network - SW** |  | 2026-11-17 | 2026-12-15 |  |
|  | 957 | **RHD4-02-002-L09-(SW)-MH Works - 1200 mm diameter with Back drop** |  | 2026-11-17 | 2026-11-28 |  |
| RHD4CZ4L09SW3101 |  | Excavation and PC Blinding works for MH 1200 mm - (RD-L-9)-Z4-L09-SW | 2d | 2026-11-17 | 2026-11-18 | RHD4CZ4L09SW3100 SS, RHD4CZ4L09ST1502 |
| RHD4CZ4L09SW3201 |  | Installation of Base for MH 1200 mm - (RD-L-9)-Z4-L09-SW | 2d | 2026-11-19 | 2026-11-21 | RHD4CZ4L09SW3101 |
| RHD4CZ4L09SW3301 |  | MH Ring and C.Slab works and Backfilling works for MH 1200 mm - (RD-L-9)-Z4-L09-SW | 2d | 2026-11-22 | 2026-11-23 | RHD4CZ4L09SW3201 |
| RHD4CZ4L09SW3401 |  | Steel Cover for MH 1200 mm - (RD-L-9)-Z4-L09-SW | 2d | 2026-11-24 | 2026-11-25 | RHD4CZ4L09SW3301 |
| RHD4CZ4L09SW3501 |  | Finishing, Benching, Testing works for MH 1200 mm - (RD-L-9)-Z4-L09-SW | 2d | 2026-11-26 | 2026-11-28 | RHD4CZ4L09SW3401 |
|  | 2659 | **RHD4-02-002-L09-(SW)-MH Works - 1200 mm diameter** |  | 2026-11-17 | 2026-12-15 |  |
| RHD4CZ4L09SW3100 |  | Excavation and PC Blinding works for MH 1200 mm - (RD-L-9)-Z4-L09-SW | 5d | 2026-11-17 | 2026-11-22 | RHD4ENSDZ4APPSW120, RHD4CZ4L09ST2100, RHD4CZ4L09ST1502 |
| RHD4CZ4L09SW3200 |  | Installation of Base for MH 1200 mm - (RD-L-9)-Z4-L09-SW | 5d | 2026-11-23 | 2026-11-28 | RHD4CZ4L09SW3100 |
| RHD4CZ4L09SW3300 |  | MH Ring and C.Slab works and Backfilling works for MH 1200 mm - (RD-L-9)-Z4-L09-SW | 5d | 2026-11-29 | 2026-12-03 | RHD4CZ4L09SW3200 |
| RHD4CZ4L09SW3400 |  | Steel Cover for MH 1200 mm - (RD-L-9)-Z4-L09-SW | 5d | 2026-12-05 | 2026-12-09 | RHD4CZ4L09SW3300 |
| RHD4CZ4L09SW3500 |  | Finishing, Benching, Testing works for MH 1200 mm - (RD-L-9)-Z4-L09-SW | 5d | 2026-12-10 | 2026-12-15 | RHD4CZ4L09SW3400 |
|  | 2652 | **RHD4-02-002-L09-(SW)-GRP Pipes - 500 mm diameter** |  |  |  |  |
|  | 2655 | **RHD4-02-002-L09-(SW)-UPVC Pipes - 200 mm diameter** |  | 2026-11-17 | 2026-12-10 |  |
| RHD4CZ4L09SW2100 |  | Excavation works for UPVC Pipe Line 200 mm - (RD-L-9)-Z4-L09-SW | 3d | 2026-11-17 | 2026-11-19 | RHD4ENSDZ4APPSW120, RHD4CZ4L09ST2100, RHD4CZ4L09ST1502 |
| RHD4CZ4L09SW2200 |  | Bedding works for UPVC Pipe Line 200 mm - (RD-L-9)-Z4-L09-SW | 3d | 2026-11-21 | 2026-11-23 | RHD4CZ4L09SW2100 |
| RHD4CZ4L09SW2300 |  | Installing for UPVC Pipe Line 200 mm - (RD-L-9)-Z4-L09-SW | 7d | 2026-11-24 | 2026-12-01 | RHD4CZ4L09SW2200, RHD4PRSHLDOSSW1003, RHD4PRSHLSTAGSW1003 |
| RHD4CZ4L09SW2400 |  | Primary Test for UPVC Pipe Line 200 mm - (RD-L-9)-Z4-L09-SW | 3d | 2026-12-02 | 2026-12-05 | RHD4CZ4L09SW2300 |
| RHD4CZ4L09SW2500 |  | Backfilling and warning tape works for UPVC Pipe Line 200 mm - (RD-L-9)-Z4-L09-SW | 5d | 2026-12-06 | 2026-12-10 | RHD4CZ4L09SW2400 |
|  | 2658 | **RHD4-02-002-L09-(SW)-Concrete Encasement** |  |  |  |  |
|  | 2686 | **RHD4-02-002-Z4-L09-Potable Network - PT** |  | 2026-12-06 | 2027-02-10 |  |
|  | 2687 | **RHD4-02-002-L09-(PT)-HDPE Pipes - 110 mm diameter** |  | 2026-12-16 | 2027-01-02 |  |
| RHD4CZ4L09PT1100 |  | Excavation works for HDPE Pipline 110 mm - (RD-L-9)-Z4-L09-PT | 2d | 2026-12-16 | 2026-12-17 | RHD4CZ4L09SW2500 SS, RHD4ENSDZ4APPPT130, RHD4ENMSPT2000, RHD4CZ4L09SW3500 |
| RHD4CZ4L09PT1200 |  | Bedding works for HDPE Pipline 110 mm - (RD-L-9)-Z4-L09-PT | 2d | 2026-12-19 | 2026-12-20 | RHD4CZ4L09PT1100 |
| RHD4CZ4L09PT1300 |  | Installing for HDPE Pipline 110 mm - (RD-L-9)-Z4-L09-PT | 2d | 2026-12-21 | 2026-12-22 | RHD4CZ4L09PT1200, RHD4PRSHLDOSPT1000, RHD4PRSHLSTAGPT1000 |
| RHD4CZ4L09PT1400 |  | Primary Test for HDPE Pipline 110 mm - (RD-L-9)-Z4-L09-PT | 2d | 2026-12-29 | 2026-12-30 | RHD4CZ4L09PT1300, RHD4CZ4L09PT5100 |
| RHD4CZ4L09PT1500 |  | Backfilling and warning tape works for HDPE Pipline 110 mm - (RD-L-9)-Z4-L09-PT | 2d | 2026-12-31 | 2027-01-02 | RHD4CZ4L09PT1400 |
|  | 1939 | **RHD4-02-002-L09-(PT)-Wash out Valves** |  | 2026-12-21 | 2026-12-24 |  |
| RHD4CZ4L09PT3102 |  | Installation for Wash out Valves for Potable Water Network - (RD-L-9)-Z4-L09-PT | 2d | 2026-12-21 | 2026-12-22 | RHD4CZ4L09PT1303 |
| RHD4CZ4L09PT3202 |  | Stem and Service box for Wash out Valves for Potable Water Network - (RD-L-9)-Z4-L09-PT | 2d | 2026-12-23 | 2026-12-24 | RHD4CZ4L09PT3102 |
|  | 2688 | **RHD4-02-002-L09-(PT)-HDPE Pipes - 160 mm diameter** |  | 2026-12-16 | 2027-01-04 |  |
| RHD4CZ4L09PT1101 |  | Excavation works for HDPE Pipline 160 mm - (RD-L-9)-Z4-L09-PT | 3d | 2026-12-16 | 2026-12-19 | RHD4ENSDZ4APPPT130, RHD4ENMSPT2000, RHD4CZ4L09PT1100 SS |
| RHD4CZ4L09PT1201 |  | Bedding works for HDPE Pipline 160 mm - (RD-L-9)-Z4-L09-PT | 3d | 2026-12-20 | 2026-12-22 | RHD4CZ4L09PT1101 |
| RHD4CZ4L09PT1301 |  | Installing for HDPE Pipline 160 mm - (RD-L-9)-Z4-L09-PT | 5d | 2026-12-23 | 2026-12-28 | RHD4CZ4L09PT1201, RHD4PRSHLDOSPT1000, RHD4PRSHLSTAGPT1000 |
| RHD4CZ4L09PT1401 |  | Primary Test for HDPE Pipline 160 mm - (RD-L-9)-Z4-L09-PT | 2d | 2026-12-29 | 2026-12-30 | RHD4CZ4L09PT1301, RHD4CZ4L09PT5100 |
| RHD4CZ4L09PT1501 |  | Backfilling and warning tape works for HDPE Pipline 160 mm - (RD-L-9)-Z4-L09-PT | 4d | 2026-12-31 | 2027-01-04 | RHD4CZ4L09PT1401 |
|  | 2690 | **RHD4-02-002-L09-(PT)-HDPE Pipes - 400 mm diameter** |  | 2026-12-06 | 2027-01-05 |  |
| RHD4CZ4L09PT1103 |  | Excavation works for HDPE Pipline 400 mm - (RD-L-9)-Z4-L09-PT | 4d | 2026-12-06 | 2026-12-09 | RHD4CZ4L09SW2500 SS, RHD4ENSDZ4APPPT130, RHD4ENMSPT2000 |

| ID | WBS | Task | Duration | Start | Finish | Predecessors |
| --- | --- | --- | --- | --- | --- | --- |
| RHD4CZ4L09PT1203 |  | Bedding works for HDPE Pipline 400 mm - (RD-L-9)-Z4-L09-PT | 4d | 2026-12-10 | 2026-12-14 | RHD4CZ4L09PT1103 |
| RHD4CZ4L09PT1303 |  | Installing for HDPE Pipline 400 mm - (RD-L-9)-Z4-L09-PT | 5d | 2026-12-15 | 2026-12-20 | RHD4CZ4L09PT1203, RHD4PRSHLDOSPT1000, RHD4PRSHLSTAGPT1000 |
| RHD4CZ4L09PT1403 |  | Primary Test for HDPE Pipline 400 mm - (RD-L-9)-Z4-L09-PT | 3d | 2026-12-29 | 2026-12-31 | RHD4CZ4L09PT1303, RHD4CZ4L09PT5100, RHD4CZ4L09PT3100 |
| RHD4CZ4L09PT1503 |  | Backfilling and warning tape works for HDPE Pipline 400 mm - (RD-L-9)-Z4-L09-PT | 4d | 2027-01-02 | 2027-01-05 | RHD4CZ4L09PT1403 |
|  | 2692 | **RHD4-02-002-L09-(PT)-Gate Valves (Direct Buried)** |  | 2026-12-26 | 2027-01-09 |  |
| RHD4CZ4L09PT3100 |  | Installation for Direct Buried Gate Valves - (RD-L-9)-Z4-L09-PT | 3d | 2026-12-26 | 2026-12-28 | RHD4CZ4L09PT1303 FF, RHD4CZ4L09PT1301 FF, RHD4CZ4L09PT1300 FF, RHD4CZ4L09PT1303 SS, RHD4CZ4L09PT1301 SS, RHD4CZ4L09PT1300 SS, RHD4PRSHLDOSPT1200, RHD4PRSHLSTAGPT1200 |
| RHD4CZ4L09PT3200 |  | Stem and Service box for Direct Buried Gate Valves - (RD-L-9)-Z4-L09-PT | 3d | 2027-01-06 | 2027-01-09 | RHD4CZ4L09PT3100, RHD4CZ4L09PT1503, RHD4CZ4L09PT1501, RHD4CZ4L09PT1500, RHD4PRSHLDOSPT1300, RHD4PRSHLSTAGPT1300 |
|  | 2697 | **RHD4-02-002-L09-(PT)-Air Valve Chambers** |  | 2026-12-10 | 2026-12-19 |  |
| RHD4CZ4L09PT2102 |  | Excavation and Bedding for Air Valve Chambers for Potable Water Network - (RD-L-9)-Z4-L09-PT | 2d | 2026-12-10 | 2026-12-12 | RHD4ENSDZ4APPPT130, RHD4CZ4L09PT1103 |
| RHD4CZ4L09PT2202 |  | PC works for Air Valve Chambers for Potable Water Network - (RD-L-9)-Z4-L09-PT | 2d | 2026-12-13 | 2026-12-14 | RHD4CZ4L09PT2102 |
| RHD4CZ4L09PT2302 |  | Installation for Air Valve Chambers for Potable Water Network - (RD-L-9)-Z4-L09-PT | 2d | 2026-12-15 | 2026-12-16 | RHD4CZ4L09PT2202, RHD4PRSHLDOSPT1100, RHD4PRSHLDOSPT1400, RHD4PRSHLSTAGPT1100, RHD4PRSHLSTAGPT1400 |
| RHD4CZ4L09PT2402 |  | Backfilling works for Air Valve Chambers for Potable Water Network - (RD-L-9)-Z4-L09-PT | 2d | 2026-12-17 | 2026-12-19 | RHD4CZ4L09PT2302 |
|  | 2698 | **RHD4-02-002-L09-(PT)-Air Valves** |  | 2026-12-21 | 2026-12-24 |  |
| RHD4CZ4L09PT3103 |  | Installation for Air Valves for Potable Water Network - (RD-L-9)-Z4-L09-PT | 2d | 2026-12-21 | 2026-12-22 | RHD4PRSHLDOSPT1200, RHD4PRSHLSTAGPT1200, RHD4CZ4L09PT1303 |
| RHD4CZ4L09PT3203 |  | Stem and Service box for Air Valves for Potable Water Network - (RD-L-9)-Z4-L09-PT | 2d | 2026-12-23 | 2026-12-24 | RHD4CZ4L09PT3103, RHD4CZ4L09PT2402, RHD4PRSHLDOSPT1300, RHD4PRSHLSTAGPT1300 |
|  | 2699 | **RHD4-02-002-L09-(PT)-Fire Hydrant** |  | 2027-01-06 | 2027-02-10 |  |
| RHD4CZ4L09PT4100 |  | Excavation and Bedding and Pipe Installation for Fire Hydrant - (RD-L-9)-Z4-L09-PT | 9d | 2027-01-06 | 2027-01-16 | RHD4CZ4L09PT1503, RHD4CZ4L09PT1501, RHD4CZ4L09PT1500, RHD4ENSDZ4APPPT130 |
| RHD4CZ4L09PT4200 |  | Valve Installation for Fire Hydrant - (RD-L-9)-Z4-L09-PT | 6d | 2027-01-17 | 2027-01-23 | RHD4CZ4L09PT4100 |
| RHD4CZ4L09PT4300 |  | Stem for Fire Hydrant - (RD-L-9)-Z4-L09-PT | 6d | 2027-01-24 | 2027-01-30 | RHD4CZ4L09PT4200 |
| RHD4CZ4L09PT4400 |  | Fire Installation for Fire Hydrant - (RD-L-9)-Z4-L09-PT | 6d | 2027-01-31 | 2027-02-06 | RHD4CZ4L09PT4300, RHD4PRSHLDOSPT1500, RHD4PRSHLSTAGPT1500, RHD4CZ4L09PT3200 |
| RHD4CZ4L09PT4500 |  | Protection Barriers for Fire Hydrant - (RD-L-9)-Z4-L09-PT | 4d | 2027-02-07 | 2027-02-10 | RHD4CZ4L09PT4400 |
|  | 2700 | **RHD4-02-002-L09-(PT)-Concrete Encasement** |  | 2026-12-24 | 2026-12-28 |  |
| RHD4CZ4L09PT5100 |  | Pipe Encasement for Potable Pipelines - (RD-L-9)-Z4-L09-PT | 4d | 2026-12-24 | 2026-12-28 | RHD4CZ4L09PT1303 FF, RHD4CZ4L09PT1301 FF, RHD4CZ4L09PT1300 FF, RHD4CZ4L09PT1303 SS, RHD4CZ4L09PT1301 SS, RHD4CZ4L09PT1300 SS, RHD4CZ4L09PT1203, RHD4CZ4L09PT1201, RHD4CZ4L09PT1200 |
|  | 1747 | **RHD4-02-002-L09-(PT)-Butterfly Valve Chamber** |  | 2026-12-19 | 2026-12-27 |  |
| RHD4CZ4L09PT2100 |  | Excavation and Bedding for Butterfly Valve Chamber for Potable Water Network - (RD-L-9)-Z4-L09-PT | 2d | 2026-12-19 | 2026-12-20 | RHD4CZ4L09PT2101 SS |
| RHD4CZ4L09PT2200 |  | PC works for Butterfly Valve Chamber for Potable Water Network - (RD-L-9)-Z4-L09-PT | 2d | 2026-12-21 | 2026-12-22 | RHD4CZ4L09PT2100 |
| RHD4CZ4L09PT2300 |  | Installation for Butterfly Valve Chamber for Potable Water Network - (RD-L-9)-Z4-L09-PT | 2d | 2026-12-23 | 2026-12-24 | RHD4CZ4L09PT2200 |
| RHD4CZ4L09PT2400 |  | Backfilling works for Butterfly Valve Chamber for Potable Water Network - (RD-L-9)-Z4-L09-PT | 2d | 2026-12-26 | 2026-12-27 | RHD4CZ4L09PT2300 |
|  | 1748 | **RHD4-02-002-L09-(PT)-Butterfly Valves** |  | 2026-12-26 | 2026-12-29 |  |
| RHD4CZ4L09PT3101 |  | Installation for Butterfly Valves for Potable Water Network - (RD-L-9)-Z4-L09-PT | 2d | 2026-12-26 | 2026-12-27 | RHD4CZ4L09PT2300 |
| RHD4CZ4L09PT3201 |  | Stem and Service box for Butterfly Valves for Potable Water Network - (RD-L-9)-Z4-L09-PT | 2d | 2026-12-28 | 2026-12-29 | RHD4CZ4L09ST2500, RHD4CZ4L09ST1502, RHD4CZ4L09PT3101, RHD4CZ4L09PT2400 |
|  | 1938 | **RHD4-02-002-L09-(PT)-Wash out Valve Chambers** |  | 2026-12-19 | 2026-12-27 |  |
| RHD4CZ4L09PT2101 |  | Excavation and Bedding for Wash out Valve Chambers for Potable Water Network - (RD-L-9)-Z4-L09-PT | 2d | 2026-12-19 | 2026-12-20 | RHD4CZ4L09PT1100 |
| RHD4CZ4L09PT2201 |  | PC works for Wash out Valve Chambers for Potable Water Network - (RD-L-9)-Z4-L09-PT | 2d | 2026-12-21 | 2026-12-22 | RHD4CZ4L09PT2101 |
| RHD4CZ4L09PT2301 |  | Installation for Wash out Valve Chambers for Potable Water Network - (RD-L-9)-Z4-L09-PT | 2d | 2026-12-23 | 2026-12-24 | RHD4CZ4L09PT2201 |
| RHD4CZ4L09PT2401 |  | Backfilling works for Wash out Valve Chambers for Potable Water Network - (RD-L-9)-Z4-L09-PT | 2d | 2026-12-26 | 2026-12-27 | RHD4CZ4L09PT2301 |
|  | 2701 | **RHD4-02-002-Z4-L09-Irrigation Network - IRR** |  | 2026-12-16 | 2027-01-21 |  |
|  | 2702 | **RHD4-02-002-L09-(IRR)-HDPE Pipes - 160 mm diameter** |  | 2026-12-16 | 2027-01-21 |  |
| RHD4CZ4L09IRR1100 |  | Excavation works for HDPE Pipline 160 mm - (RD-L-9)-Z4-L09-IRR | 7d | 2026-12-16 | 2026-12-23 | RHD4CZ4L09PT1101 SS, RHD4ENSDZ4APPIRR140, RHD4ENMSRR2000, RHD4CZ4L09ST2500 |
| RHD4CZ4L09IRR1200 |  | Bedding works for HDPE Pipline 160 mm - (RD-L-9)-Z4-L09-IRR | 7d | 2026-12-24 | 2026-12-31 | RHD4CZ4L09IRR1100 |
| RHD4CZ4L09IRR1300 |  | Installing for HDPE Pipline 160 mm - (RD-L-9)-Z4-L09-IRR | 7d | 2027-01-02 | 2027-01-09 | RHD4CZ4L09IRR1200, RHD4PRSHLDOSIRR1000, RHD4PRSHLSTAGIRR1000 |
| RHD4CZ4L09IRR1400 |  | Primary Test for HDPE Pipline 160 mm - (RD-L-9)-Z4-L09-IRR | 4d | 2027-01-10 | 2027-01-13 | RHD4CZ4L09IRR1300 |
| RHD4CZ4L09IRR1500 |  | Backfilling and warning tape works for HDPE Pipline 160 mm - (RD-L-9)-Z4-L09-IRR | 7d | 2027-01-14 | 2027-01-21 | RHD4CZ4L09IRR1400 |
|  | 2704 | **RHD4-02-002-L09-(IRR)-HDPE Pipes - 200 mm diameter** |  |  |  |  |
|  | 2710 | **RHD4-02-002-L09-(IRR)-Gate Valves (Direct Buried)** |  | 2027-01-05 | 2027-01-13 |  |
| RHD4CZ4L09IRR3100 |  | Installation for Direct Buried Gate Valves - (RD-L-9)-Z4-L09-IRR | 4d | 2027-01-05 | 2027-01-09 | RHD4CZ4L09IRR1300 SS, RHD4CZ4L09IRR1300 FF, RHD4PRSHLDOSIRR1100, RHD4PRSHLSTAGIRR1100 |
| RHD4CZ4L09IRR3200 |  | Stem and Service box for Direct Buried Gate Valves - (RD-L-9)-Z4-L09-IRR | 4d | 2027-01-10 | 2027-01-13 | RHD4CZ4L09IRR3100, RHD4PRSHLDOSIRR1300, RHD4PRSHLSTAGIRR1300 |
|  | 2713 | **RHD4-02-002-L09-(IRR)-Wash out Chamber** |  | 2027-01-10 | 2027-01-18 |  |
| RHD4CZ4L09IRR2101 |  | Excavation and Bedding for Wash out Chamber for Irrigation Network - (RD-L-9)-Z4-L09-IRR | 2d | 2027-01-10 | 2027-01-11 | RHD4CZ4L09IRR1300, RHD4ENSDZ4APPIRR140 |
| RHD4CZ4L09IRR2201 |  | PC works for Wash out Chamber for Irrigation Network - (RD-L-9)-Z4-L09-IRR | 2d | 2027-01-12 | 2027-01-13 | RHD4CZ4L09IRR2101 |
| RHD4CZ4L09IRR2301 |  | Installation for Wash out Chamber for Irrigation Network - (RD-L-9)-Z4-L09-IRR | 2d | 2027-01-14 | 2027-01-16 | RHD4CZ4L09IRR2201, RHD4PRSHLDOSIRR1200, RHD4PRSHLDOSIRR1400, RHD4PRSHLSTAGIRR1200, RHD4PRSHLSTAGIRR1400 |
| RHD4CZ4L09IRR2401 |  | Backfilling works for Wash out Chamber for Irrigation Network - (RD-L-9)-Z4-L09-IRR | 2d | 2027-01-17 | 2027-01-18 | RHD4CZ4L09IRR2301 |
|  | 2714 | **RHD4-02-002-L09-(IRR)-Wash out Valves** |  | 2027-01-17 | 2027-01-20 |  |
| RHD4CZ4L09IRR3102 |  | Installation for Wash out Valve for Irrigation Network - (RD-L-9)-Z4-L09-IRR | 2d | 2027-01-17 | 2027-01-18 | RHD4CZ4L09IRR2301, RHD4PRSHLDOSIRR1100, RHD4PRSHLSTAGIRR1100 |
| RHD4CZ4L09IRR3202 |  | Stem and Service box for Wash out Valve for Irrigation Network - (RD-L-9)-Z4-L09-IRR | 2d | 2027-01-19 | 2027-01-20 | RHD4CZ4L09IRR3102, RHD4CZ4L09IRR2401, RHD4PRSHLDOSIRR1300, RHD4PRSHLSTAGIRR1300 |
|  | 2735 | **RHD4-02-002-Z4-L09-Medium Voltage Network - MV** |  | 2027-01-07 | 2027-02-13 |  |
|  | 2736 | **RHD4-02-002-L09-(MV)-Medium Voltage cable trench** |  | 2027-01-07 | 2027-02-01 |  |
| RHD4CZ4L09MV1100 |  | Excavation for Medium Voltage Trench - (RD-L-9)-Z4-L09-MV | 6d | 2027-01-07 | 2027-01-13 | RHD4ENSDZ4APPMV150, RHD4CZ4L09RD3100, RHD4CZ4L014MV1100 |
| RHD4CZ4L09MV1200 |  | Trench Backfilling for Medium Voltage Network - (RD-L-9)-Z4-L09-MV | 6d | 2027-01-26 | 2027-02-01 | RHD4CZ4L09MV3200, RHD4CZ4L09MV3101 |
|  | 2738 | **RHD4-02-002-L09-(MV)-Medium Voltage cables 3Cx 500 mm²** |  | 2027-01-14 | 2027-02-13 |  |
| RHD4CZ4L09MV3100 |  | Installation of Medium Voltage Cables 3Cx 500 mm² - (RD-L-9)-Z4-L09-MV | 5d | 2027-01-14 | 2027-01-19 | RHD4CZ4L09MV1100, RHD4PRSHLDOSMV1100, RHD4ENMSMV2000, RHD4CZ4L09ST2100, RHD4ENMSMV2010, RHD4PRSHLSTAGMV1100 |
| RHD4CZ4L09MV3200 |  | Joints Installation of Medium Voltage Cables 3Cx 500 mm² - (RD-L-9)-Z4-L09-MV | 5d | 2027-01-20 | 2027-01-25 | RHD4CZ4L09MV3100, RHD4PRSHLDOSMV1300, RHD4PRSHLSTAGMV1300 |
| RHD4CZ4L09MV3300 |  | Testing of Medium Voltage Cables 3Cx 500 mm² - (RD-L-9)-Z4-L09-MV | 5d | 2027-02-02 | 2027-02-07 | RHD4CZ4L09MV3200, RHD4CZ4L09MV1200, RHD4CZ4L09MV4200 |
| RHD4CZ4L09MV3400 |  | Termination of Medium Voltage Cables 3Cx 500 mm² - (RD-L-9)-Z4-L09-MV | 5d | 2027-02-08 | 2027-02-13 | RHD4CZ4L09MV3300 |
|  | 2739 | **RHD4-02-002-L09-(MV)-Medium Voltage cables 3Cx 50 mm²** |  | 2027-01-14 | 2027-02-06 |  |
| RHD4CZ4L09MV3101 |  | Installation of Medium Voltage Cables 3Cx 50 mm² - (RD-L-9)-Z4-L09-MV | 2d | 2027-01-14 | 2027-01-16 | RHD4CZ4L09MV1100, RHD4PRSHLDOSMV1200, RHD4ENMSMV2000, RHD4ENMSMV2010, RHD4PRSHLSTAGMV1200 |
| RHD4CZ4L09MV3301 |  | Testing of Medium Voltage Cables 3Cx 50 mm² - (RD-L-9)-Z4-L09-MV | 2d | 2027-02-02 | 2027-02-03 | RHD4CZ4L09MV3101, RHD4CZ4L09MV1200 |
| RHD4CZ4L09MV3401 |  | Termination of Medium Voltage Cables 3Cx 50 mm² - (RD-L-9)-Z4-L09-MV | 2d | 2027-02-04 | 2027-02-06 | RHD4CZ4L09MV3301 |
|  | 2740 | **RHD4-02-002-L09-(MV)-Normally open Point (Outdoor Type)** |  | 2027-01-18 | 2027-01-21 |  |
| RHD4CZ4L09MV4100 |  | Installation for Normally open Point - (RD-L-9)-Z4-L09-MV | 2d | 2027-01-18 | 2027-01-19 | RHD4CZ4L09MV3101 SS, RHD4CZ4L09MV3100 FF, RHD4PRSHLDOSMV1400, RHD4PRSHLSTAGMV1400 |

| ID | WBS | Task | Duration | Start | Finish | Predecessors |
| --- | --- | --- | --- | --- | --- | --- |
| RHD4CZ4L09MV4200 |  | Termination for Normally open Point - (RD-L-9)-Z4-L09-MV | 2d | 2027-01-20 | 2027-01-21 | RHD4CZ4L09MV4100 |
|  | 2741 | **RHD4-02-002-L09-(MV)-Unit Substations** |  | 2027-02-02 | 2027-02-10 |  |
| RHD4CZ4L09MV5100 |  | Excavation for Unit Substations for Medium Voltage Network - (RD-L-9)-Z4-L09-MV | 2d | 2027-02-02 | 2027-02-03 | RHD4CZ4L09MV1200, RHD4ENSDZ4APPMV150 |
| RHD4CZ4L09MV5200 |  | Concrete Base Placement for Unit Substations for Medium Voltage Network - (RD-L-9)-Z4-L09-MV | 2d | 2027-02-04 | 2027-02-06 | RHD4CZ4L09MV5100 |
| RHD4CZ4L09MV5300 |  | Installation for Fences and doors for Medium Voltage Network - (RD-L-9)-Z4-L09-MV | 2d | 2027-02-07 | 2027-02-08 | RHD4CZ4L09MV5200 |
| RHD4CZ4L09MV5400 |  | Installation for Unit Substations for Medium Voltage Network - (RD-L-9)-Z4-L09-MV | 2d | 2027-02-09 | 2027-02-10 | RHD4CZ4L09MV5300, RHD4CZ4L09MV3301 |
|  | 2742 | **RHD4-02-002-Z4-L09-Low Voltage Network - LV** |  | 2026-12-24 | 2027-03-23 |  |
|  | 2743 | **RHD4-02-002-L09-(LV)-Low Voltage duct banks** |  | 2026-12-24 | 2027-01-02 |  |
| RHD4CZ4L09LV2100 |  | Excavation of Duct Banks for Low Voltage Network - (RD-L-9)-Z4-L09-LV | 2d | 2026-12-24 | 2026-12-26 | RHD4CZ4L09RW4000, RHD4ENSDZ4APPLV160, RHD4CZ4L09IRR1100 |
| RHD4CZ4L09LV2200 |  | Installation of Duct Banks for Low Voltage Network - (RD-L-9)-Z4-L09-LV | 2d | 2026-12-27 | 2026-12-28 | RHD4CZ4L09LV2100, RHD4PRSHLDOSLV1000, RHD4PRSHLSTAGLV1000 |
| RHD4CZ4L09LV2300 |  | Pouring of Duct Banks for Low Voltage Network - (RD-L-9)-Z4-L09-LV | 2d | 2026-12-29 | 2026-12-30 | RHD4CZ4L09LV2200 |
| RHD4CZ4L09LV2400 |  | Backfilling of Duct Banks for Low Voltage Network - (RD-L-9)-Z4-L09-LV | 2d | 2026-12-31 | 2027-01-02 | RHD4CZ4L09LV2300 |
|  | 2745 | **RHD4-02-002-L09-(LV)-Low Voltage cables** |  | 2027-03-04 | 2027-03-16 |  |
| RHD4CZ4L09LV3100 |  | Excavation for Low Voltage Cables for Low Voltage Network - (RD-L-9)-Z4-L09-LV | 2d | 2027-03-04 | 2027-03-06 | RHD4CZ4L09LV2400, RHD4CZ4L09MV1200, RHD4ENSDZ4APPLV160, RHD4CZ4L09SL3300, RHD4CZ4L09MV3401, RHD4CZ4L09MV3400 |
| RHD4CZ4L09LV3200 |  | Cable Laying of Low Voltage Cables for Low Voltage Network - (RD-L-9)-Z4-L09-LV | 2d | 2027-03-07 | 2027-03-08 | RHD4CZ4L09LV3100, RHD4PRSHLDOSLV1100, RHD4ENMSLV2000, RHD4ENMSLV2010, RHD4PRSHLSTAGLV1100 |
| RHD4CZ4L09LV3300 |  | Warning tape and Backfill for Low Voltage Cables for Low Voltage Network - (RD-L-9)-Z4-L09-LV | 2d | 2027-03-13 | 2027-03-14 | RHD4CZ4L09LV3200 |
| RHD4CZ4L09LV3400 |  | Testing of Low Voltage Cables for Low Voltage Network - (RD-L-9)-Z4-L09-LV | 2d | 2027-03-15 | 2027-03-16 | RHD4CZ4L09LV3300 |
|  | 2746 | **RHD4-02-002-L09-(LV)-Low Voltage Distribution Pillars** |  | 2027-03-17 | 2027-03-23 |  |
| RHD4CZ4L09LV4100 |  | Leveling for Distribution Pillars for Low Voltage Network - (RD-L-9)-Z4-L09-LV | 2d | 2027-03-17 | 2027-03-18 | RHD4CZ4L09LV3300, RHD4CZ4L09LV3400 |
| RHD4CZ4L09LV4200 |  | Lean Concrete for Distribution Pillars for Low Voltage Network - (RD-L-9)-Z4-L09-LV | 2d | 2027-03-20 | 2027-03-21 | RHD4CZ4L09LV4100 |
| RHD4CZ4L09LV4300 |  | Installation of Distribution Pillars for Low Voltage Network - (RD-L-9)-Z4-L09-LV | 2d | 2027-03-22 | 2027-03-23 | RHD4CZ4L09LV4200, RHD4PRSHLDOSLV1200, RHD4PRSHLDOSLV1300, RHD4PRSHLSTAGLV1200, RHD4PRSHLSTAGLV1300 |
|  | 2747 | **RHD4-02-002-L09-(LV)-Low Voltage Distribution Pillars Earthing** |  |  |  |  |
|  | 2748 | **RHD4-02-002-Z4-L09-Street Lighting Network - SL** |  | 2026-12-24 | 2027-04-10 |  |
|  | 2749 | **RHD4-02-002-L09-(SL)-Street Lighting duct banks** |  | 2026-12-24 | 2027-01-06 |  |
| RHD4CZ4L09SL2100 |  | Excavation of Duct Banks for Street Lighting Network - (RD-L-9)-Z4-L09-SL | 3d | 2026-12-24 | 2026-12-27 | RHD4CZ4L09LV2100 SS, RHD4ENSDZ4APPSL170 |
| RHD4CZ4L09SL2200 |  | Installation of Duct Banks for Street Lighting Network - (RD-L-9)-Z4-L09-SL | 4d | 2026-12-28 | 2026-12-31 | RHD4CZ4L09SL2100, RHD4PRSHLDOSSL1000, RHD4PRSHLSTAGSL1000 |
| RHD4CZ4L09SL2300 |  | Pouring of Duct Banks for Street Lighting Network - (RD-L-9)-Z4-L09-SL | 3d | 2027-01-02 | 2027-01-04 | RHD4CZ4L09SL2200, RHD4CZ4L09LV2300 |
| RHD4CZ4L09SL2400 |  | Backfilling of Duct Banks for Street Lighting Network - (RD-L-9)-Z4-L09-SL | 2d | 2027-01-05 | 2027-01-06 | RHD4CZ4L09SL2300, RHD4CZ4L09LV2400 |
|  | 2750 | **RHD4-02-002-L09-(SL)-Street Lighting Drawpit** |  | 2027-02-02 | 2027-02-06 |  |
| RHD4CZ4L09SL5100 |  | Excavation of Drawpit size 600x600x900mm for Street Lighting Network - (RD-L-9)-Z4-L09-SL | 2d | 2027-02-02 | 2027-02-03 | RHD4ENSDZ4APPSL170, RHD4CZ4L09MV1200 |
| RHD4CZ4L09SL5200 |  | Installation of Drawpit size 600x600x900mm for Street Lighting Network - (RD-L-9)-Z4-L09-SL | 2d | 2027-02-04 | 2027-02-06 | RHD4CZ4L09SL5100, RHD4PRSHLDOSSL1400, RHD4PRSHLSTAGSL1400, RHD4CZ4L09PT3201 |
|  | 2751 | **RHD4-02-002-L09-(SL)-Street Lighting cables** |  | 2027-01-28 | 2027-03-23 |  |
| RHD4CZ4L09SL3100 |  | Excavation for Street Lighting Cables for Street Lighting Network - (RD-L-9)-Z4-L09-SL | 11d | 2027-01-28 | 2027-02-09 | RHD4CZ4L09SL1300, RHD4ENSDZ4APPSL170 |
| RHD4CZ4L09SL3200 |  | Cable Laying of Street Lighting Cables for Street Lighting Network - (RD-L-9)-Z4-L09-SL | 9d | 2027-02-10 | 2027-02-20 | RHD4CZ4L09SL3100, RHD4PRSHLDOSSL1100, RHD4ENMSSL2000, RHD4ENMSSL2010, RHD4PRSHLSTAGSL1100 |
| RHD4CZ4L09SL3300 |  | Warning tape and Backfill for Street Lighting Cables for Street Lighting Network - (RD-L-9)-Z4-L09-SL | 9d | 2027-02-21 | 2027-03-03 | RHD4CZ4L09SL3200 |
| RHD4CZ4L09SL3400 |  | Testing of Street Lighting Cables for Street Lighting Network - (RD-L-9)-Z4-L09-SL | 6d | 2027-03-17 | 2027-03-23 | RHD4CZ4L09SL3300, RHD4CZ4L09LV3400 |
|  | 2752 | **RHD4-02-002-L09-(SL)-Street Lighting Poles** |  | 2027-01-07 | 2027-04-10 |  |
| RHD4CZ4L09SL1100 |  | Excavation for RC Base for Lighting Poles for Street Lighting Network - (RD-L-9)-Z4-L09-SL | 6d | 2027-01-07 | 2027-01-13 | RHD4CZ4L09SL2400, RHD4ENSDZ4APPSL170, RHD4CZ4C031SL1100 |
| RHD4CZ4L09SL1200 |  | Installation for RC Base for Lighting Poles for Street Lighting Network - (RD-L-9)-Z4-L09-SL | 6d | 2027-01-14 | 2027-01-20 | RHD4CZ4L09SL1100 |
| RHD4CZ4L09SL1300 |  | Backfill for RC Base for Lighting Poles for Street Lighting Network - (RD-L-9)-Z4-L09-SL | 6d | 2027-01-21 | 2027-01-27 | RHD4CZ4L09SL1200 |
| RHD4CZ4L09SL1400 |  | Installation for Lighting Poles for Street Lighting Network - (RD-L-9)-Z4-L09-SL | 9d | 2027-03-24 | 2027-04-03 | RHD4CZ4L09SL1300, RHD4CZ4L09SL3400, RHD4PRSHLDOSSL1200, RHD4ENMSSL2000, RHD4ENMSSL2010, RHD4PRSHLSTAGSL1200 |
| RHD4CZ4L09SL1500 |  | Luminaire Installation for Lighting Poles for Street Lighting Network - (RD-L-9)-Z4-L09-SL | 6d | 2027-04-04 | 2027-04-10 | RHD4CZ4L09SL1400, RHD4PRSHLDOSSL1300, RHD4PRSHLSTAGSL1300 |
|  | 2753 | **RHD4-02-002-L09-(SL)-Street Lighting Feeder Pillars** |  | 2027-03-24 | 2027-04-05 |  |
| RHD4CZ4L09SL4100 |  | Leveling for Distribution Pillars for Street Lighting Network - (RD-L-9)-Z4-L09-SL | 2d | 2027-03-24 | 2027-03-25 | RHD4CZ4L09SL3300, RHD4CZ4L09SL3400 |
| RHD4CZ4L09SL4200 |  | Lean Concrete for Distribution Pillars for Street Lighting Network - (RD-L-9)-Z4-L09-SL | 2d | 2027-03-27 | 2027-03-28 | RHD4CZ4L09SL4100 |
| RHD4CZ4L09SL4300 |  | Installation of Distribution Pillars for Street Lighting Network - (RD-L-9)-Z4-L09-SL | 2d | 2027-04-04 | 2027-04-05 | RHD4CZ4L09SL4200, RHD4CZ4L09SL1400 |
|  | 2754 | **RHD4-02-002-L09-(SL)-Street Lighting Earthing System** |  | 2027-04-06 | 2027-04-07 |  |
| RHD4CZ4L09SL6100 |  | Installation of Earthing for Lighting Poles and Fedder Pillers for Street Lighting Network - (RD-L-9)-Z4-L09-SL | 2d | 2027-04-06 | 2027-04-07 | RHD4CZ4L09SL4300, RHD4ENMSER2000, RHD4ENMSER2010 |
|  | 2760 | **RHD4-02-002-Z4-L09-Telecommunications Network - TC** |  | 2026-08-18 | 2027-03-20 |  |
|  | 2761 | **RHD4-02-002-L09-(TC)-Telecommunications Ducts** |  | 2027-01-14 | 2027-03-20 |  |
| RHD4CZ4L09TC2100 |  | Excavation of HDPE Ducts for Telecom Network - (RD-L-9)-Z4-L09-TC | 19d | 2027-01-14 | 2027-02-04 | RHD4ENSDZ4APPTC190, RHD4CZ4L09SL2100, RHD4CZ4L09SL1100 |
| RHD4CZ4L09TC2200 |  | Installation of HDPE Ducts for Telecom Network - (RD-L-9)-Z4-L09-TC | 11d | 2027-02-06 | 2027-02-17 | RHD4CZ4L09TC2100, RHD4PRSHLDOSTC1000, RHD4PRSHLSTAGTC1000 |
| RHD4CZ4L09TC2400 |  | Backfilling of HDPE Ducts for Telecom Network - (RD-L-9)-Z4-L09-TC | 19d | 2027-02-23 | 2027-03-20 | RHD4CZ4L09TC2200, RHD4CZ4L09TC5200 |
|  | 2762 | **RHD4-02-002-L09-(TC)-Telecommunications Manholes** |  | 2027-02-06 | 2027-02-21 |  |
| RHD4CZ4L09TC5100 |  | Excavation for Manholes for Telecom Network - (RD-L-9)-Z4-L09-TC | 7d | 2027-02-06 | 2027-02-13 | RHD4CZ4L09TC2100, RHD4ENSDZ4APPTC190 |
| RHD4CZ4L09TC5200 |  | Installation of Manholes for Telecom Network - (RD-L-9)-Z4-L09-TC | 7d | 2027-02-14 | 2027-02-21 | RHD4CZ4L09TC5100, RHD4CZ4L09TC2200 SS, RHD4PRSHLDOSTC1200, RHD4PRSHLSTAGTC1200 |
|  | 2763 | **RHD4-02-002-L09-(TC)-Telecomminications Road Crossings** |  | 2026-08-18 | 2026-08-26 |  |
| RHD4CZ4L09TC3100 |  | Excavation for Road Crossings for Telecom Network - (RD-L-9)-Z4-L09-TC | 2d | 2026-08-18 | 2026-08-19 | RHD4ENSDZ4APPTC190, RHD4CZ4L09ST3102 |
| RHD4CZ4L09TC3200 |  | Installation of Road Crossings for Telecom Network - (RD-L-9)-Z4-L09-TC | 2d | 2026-08-20 | 2026-08-22 | RHD4CZ4L09TC3100, RHD4PRSHLDOSTC1100, RHD4PRSHLSTAGTC1100 |
| RHD4CZ4L09TC3300 |  | Pouring of Road Crossings for Telecom Network - (RD-L-9)-Z4-L09-TC | 2d | 2026-08-23 | 2026-08-24 | RHD4CZ4L09TC3200 |
| RHD4CZ4L09TC3400 |  | Backfilling of Road Crossings for Telecom Network - (RD-L-9)-Z4-L09-TC | 2d | 2026-08-25 | 2026-08-26 | RHD4CZ4L09TC3300 |
|  | 2764 | **RHD4-02-002-Z4-L09-Information and Communication Technologies - ICT** |  | 2026-08-18 | 2027-04-13 |  |
|  | 2765 | **RHD4-02-002-L09-(ICT)-Information and Communication Technologies Ducts** |  | 2027-02-06 | 2027-04-13 |  |
| RHD4CZ4L09ICT2100 |  | Excavation of HDPE Ducts for ICT Network - (RD-L-9)-Z4-L09-ICT | 19d | 2027-02-06 | 2027-02-28 | RHD4ENSDZ4APPICT200, RHD4CZ4L09TC3100, RHD4CZ4L09TC2100, RHD4CZ4L09MV4200 |
| RHD4CZ4L09ICT2200 |  | Installation of HDPE Ducts for ICT Network - (RD-L-9)-Z4-L09-ICT | 12d | 2027-03-01 | 2027-03-17 | RHD4CZ4L09ICT2100, RHD4PRSHLDOSICT1000, RHD4PRSHLSTAGICT1000, RHD4CZ4L09MV5400 |
| RHD4CZ4L09ICT2400 |  | Backfilling of HDPE Ducts for ICT Network - (RD-L-9)-Z4-L09-ICT | 19d | 2027-03-23 | 2027-04-13 | RHD4CZ4L09ICT2200, RHD4CZ4L09ICT5200, RHD4CZ4L09TC2400, RHD4CZ4L09LV4300 FF |
|  | 2766 | **RHD4-02-002-L09-(ICT)-Information and Communication Technologies Manholes** |  | 2027-03-01 | 2027-03-22 |  |
| RHD4CZ4L09ICT5100 |  | Excavation for Manholes for ICT Network - (RD-L-9)-Z4-L09-ICT | 8d | 2027-03-01 | 2027-03-13 | RHD4CZ4L09ICT2100, RHD4ENSDZ4APPICT200 |
| RHD4CZ4L09ICT5200 |  | Installation of Manholes for ICT Network - (RD-L-9)-Z4-L09-ICT | 8d | 2027-03-14 | 2027-03-22 | RHD4CZ4L09ICT5100, RHD4CZ4L09ICT2200 SS, RHD4PRSHLDOSICT1200, RHD4PRSHLSTAGICT1200 |
|  | 2767 | **RHD4-02-002-L09-(ICT)-Information and Communication Technologies Road Crossings** |  | 2026-08-18 | 2026-08-26 |  |

| ID | WBS | Task | Duration | Start | Finish | Predecessors |
| --- | --- | --- | --- | --- | --- | --- |
| RHD4CZ4L09ICT3100 |  | Excavation for Road Crossings for ICT Network - (RD-L-9)-Z4-L09-ICT | 2d | 2026-08-18 | 2026-08-19 | RHD4ENSDZ4APPICT200, RHD4CZ4L09ST3102 |
| RHD4CZ4L09ICT3200 |  | Installation of Road Crossings for ICT Network - (RD-L-9)-Z4-L09-ICT | 2d | 2026-08-20 | 2026-08-22 | RHD4CZ4L09ICT3100, RHD4PRSHLDOSICT1100, RHD4PRSHLSTAGICT1100 |
| RHD4CZ4L09ICT3300 |  | Pouring of Road Crossings for ICT Network - (RD-L-9)-Z4-L09-ICT | 2d | 2026-08-23 | 2026-08-24 | RHD4CZ4L09ICT3200 |
| RHD4CZ4L09ICT3400 |  | Backfilling of Road Crossings for ICT Network - (RD-L-9)-Z4-L09-ICT | 2d | 2026-08-25 | 2026-08-26 | RHD4CZ4L09ICT3300 |
|  | 2755 | **RHD4-02-002-Z4-L09-Landscape Network - LS** |  |  |  |  |
|  | 2756 | **RHD4-02-002-L09-(LS)-Landscape Lighting cables** |  |  |  |  |
|  | 2757 | **RHD4-02-002-L09-(LS)-Landscape Feeder Pillars** |  |  |  |  |
|  | 2758 | **RHD4-02-002-L09-(LS)-Landscape Bollard Poles** |  |  |  |  |
|  | 2759 | **RHD4-02-002-L09-(LS)-Landscape Feeder Pillars Earthing** |  |  |  |  |
|  | 2768 | **RHD4-02-002-Z4-L09-Security Network - CCTV** |  |  |  |  |
|  | 2769 | **RHD4-02-002-L09-(CCTV)-Civil Works** |  |  |  |  |
|  | 2770 | **RHD4-02-002-L09-(CCTV)-CCTV Poles** |  |  |  |  |
|  | 2771 | **RHD4-02-002-L09-(CCTV)-Camera** |  |  |  |  |
|  | 2772 | **RHD4-02-002-L09-(CCTV)-Power and Infrastructure** |  |  |  |  |
|  | 2774 | **RHD4-02-002-L09-(CCTV)-CCTV Panels and Components** |  |  |  |  |
|  | 2218 | **RHD4-02-002-Z4-C012** |  | 2026-08-18 | 2027-04-29 |  |
|  | 2340 | **RHD4-02-002-Z4-C012-Crossings Irrigation Network - IRRC** |  |  |  |  |
|  | 2341 | **RHD4-02-002-C012-(IRRC)-HDPE Pipes - 160 mm diameter** |  |  |  |  |
|  | 2345 | **RHD4-02-002-C012-(IRRC)-HDPE Pipes - 315 mm diameter** |  |  |  |  |
|  | 2349 | **RHD4-02-002-C012-(IRRC)-Gate Valves (Direct Buried)** |  |  |  |  |
|  | 2350 | **RHD4-02-002-C012-(IRRC)-Butterfly Valve Chamber** |  |  |  |  |
|  | 2351 | **RHD4-02-002-C012-(IRRC)-Butterfly Valves** |  |  |  |  |
|  | 2397 | **RHD4-02-002-Z4-C012-Road Works - RD** |  | 2026-08-25 | 2027-04-29 |  |
|  | 2398 | **RHD4-02-002-C012-(RD)-Subgrade** |  | 2026-08-25 | 2026-08-30 |  |
| RHD4CZ4C012RD1100 |  | Supply, lay and compaction subgrade compacted thickness 300 mm for Roads - (RD-C-1 /2)-Z4-C012-RD | 5d | 2026-08-25 | 2026-08-30 | RHD4CZ4C012ICT3400 SS, RHD4ENSDZ4APPEW100, RHD4ENSDZ4APPRD220 |
|  | 2399 | **RHD4-02-002-C012-(RD)-Aggregate Base Course** |  | 2026-08-31 | 2026-09-05 |  |
| RHD4CZ4C012RD2100 |  | Supply, lay and compaction Aggregate base course compacted thickness 300 mmfor Roads - (RD-C-1 /2)-Z4-C012-RD | 5d | 2026-08-31 | 2026-09-05 | RHD4CZ4C012RD1100, RHD4PRSHLDOSRD1000, RHD4PRSHLSTAGRD1000 |
|  | 2400 | **RHD4-02-002-C012-(RD)-Bituminous base course Two Layers, including (MC1)&(RC2)** |  | 2026-09-06 | 2027-04-14 |  |
| RHD4CZ4C012RD3100 |  | Supply, lay and Asphaltic base course including Prime Coat (MC1) for 1st Layer - (RD-C-1 /2)-Z4-C012-RD | 5d | 2026-09-06 | 2026-09-10 | RHD4CZ4C012RD2100, RHD4PRSHLDOSRD1100, RHD4ENMSASPH2000, RHD4ENMSASPH2010, RHD4PRSHLSTAGRD1100 |
| RHD4CZ4C012RD3200 |  | Supply, lay and Asphaltic base course including Tack Coat (RC2) for 2nd Layer - (RD-C-1 /2)-Z4-C012-RD | 5d | 2027-04-10 | 2027-04-14 | RHD4CZ4C012RD3100, RHD4PRSHLDOSRD1100, RHD4PRSHLSTAGRD1100, RHD4CZ4C012ICT2400 |
|  | 2402 | **RHD4-02-002-C012-(RD)-Precast Concrete Curb** |  | 2027-04-15 | 2027-04-20 |  |
| RHD4CZ4C012RD5100 |  | Supply and installation Precast Concrete Kerb for Roads - (RD-C-1 /2)-Z4-C012-RD | 5d | 2027-04-15 | 2027-04-20 | RHD4CZ4C012RD3200, RHD4PRSHLDOSRD1200, RHD4ENMSRD2000, RHD4ENMSRD2010, RHD4PRSHLSTAGRD1200 |
|  | 2405 | **RHD4-02-002-C012-(RD)-Traffic Signage** |  | 2027-04-21 | 2027-04-27 |  |
| RHD4CZ4C012RD8100 |  | Installation of Traffic Signage for Road Network - (RD-C-1 /2)-Z4-C012-RD | 6d | 2027-04-21 | 2027-04-27 | RHD4CZ4C012RD5100, RHD4CZ4C012TC2400, RHD4CZ4C012ICT2400, RHD4PRSHLDOSRD1600, RHD4PRSHLSTAGRD1600, RHD4CZ4C012LV4300, RHD4CZ4C031RD8100, RHD4CZ4RA02RD9100 |
|  | 2403 | **RHD4-02-002-C012-(RD)-Precast Interlocking Block Pavers** |  |  |  |  |
|  | 2401 | **RHD4-02-002-C012-(RD)-Bituminous concrete wearing course including tack coat (RC2)** |  | 2027-04-21 | 2027-04-24 |  |
| RHD4CZ4C012RD4100 |  | Supply, lay and compaction Asphaltic wearing course including tack Coat (RC2)for Road Network - (RD-C-1 /2)-Z4-C012-RD | 3d | 2027-04-21 | 2027-04-24 | RHD4CZ4C012RD5100 |
|  | 2404 | **RHD4-02-002-C012-(RD)-Pavement Marking** |  | 2027-04-25 | 2027-04-29 |  |
| RHD4CZ4C012RD7100 |  | Pavement Markings for Road Network - (RD-C-1 /2)-Z4-C012-RD | 5d | 2027-04-25 | 2027-04-29 | RHD4CZ4C012RD4100, RHD4PRSHLDOSRD1500, RHD4PRSHLSTAGRD1500 |
|  | 2308 | **RHD4-02-002-Z4-C012-Potable Network - PT** |  |  |  |  |
|  | 2322 | **RHD4-02-002-C012-(PT)-Concrete Encasement** |  |  |  |  |
|  | 2323 | **RHD4-02-002-Z4-C012-Irrigation Network - IRR** |  | 2027-01-21 | 2027-02-13 |  |
|  | 2326 | **RHD4-02-002-C012-(IRR)-HDPE Pipes - 200 mm diameter** |  |  |  |  |
|  | 6107 | **RHD4-02-002-C012-(IRR)-HDPE Pipes - 160 mm diameter** |  | 2027-01-21 | 2027-02-01 |  |
| RHD4CZ4C012IRR1100 |  | Excavation works for HDPE Pipline 160 mm - (RD-C-1 /2)-Z4-C012-IRR | 2d | 2027-01-21 | 2027-01-23 | RHD4ENSDZ4APPIRR140, RHD4CZ4C012RW2000, RHD4CZ4L09IRR3202 |
| RHD4CZ4C012IRR1200 |  | Bedding works for HDPE Pipline 160 mm - (RD-C-1 /2)-Z4-C012-IRR | 2d | 2027-01-24 | 2027-01-25 | RHD4CZ4C012IRR1100 |
| RHD4CZ4C012IRR1300 |  | Installing for HDPE Pipline 160 mm - (RD-C-1 /2)-Z4-C012-IRR | 2d | 2027-01-26 | 2027-01-27 | RHD4CZ4C012IRR1200 |
| RHD4CZ4C012IRR1400 |  | Primary Test for HDPE Pipline 160 mm - (RD-C-1 /2)-Z4-C012-IRR | 2d | 2027-01-28 | 2027-01-30 | RHD4CZ4C012IRR1300 |
| RHD4CZ4C012IRR1500 |  | Backfilling and warning tape works for HDPE Pipline 160 mm - (RD-C-1 /2)-Z4-C012-IRR | 2d | 2027-01-31 | 2027-02-01 | RHD4CZ4C012IRR1400 |
|  | 6111 | **RHD4-02-002-C012-(IRR)-HDPE Pipes - 315 mm diameter** |  | 2027-01-24 | 2027-02-10 |  |
| RHD4CZ4C012IRR1104 |  | Excavation works for HDPE Pipline 315 mm - (RD-C-1 /2)-Z4-C012-IRR | 4d | 2027-01-24 | 2027-01-27 | RHD4CZ4C012IRR1100 |
| RHD4CZ4C012IRR1204 |  | Bedding works for HDPE Pipline 315 mm - (RD-C-1 /2)-Z4-C012-IRR | 3d | 2027-01-28 | 2027-01-31 | RHD4CZ4C012IRR1104 |
| RHD4CZ4C012IRR1304 |  | Installing for HDPE Pipline 315 mm - (RD-C-1 /2)-Z4-C012-IRR | 4d | 2027-02-01 | 2027-02-04 | RHD4CZ4C012IRR1204 |
| RHD4CZ4C012IRR1404 |  | Primary Test for HDPE Pipline 315 mm - (RD-C-1 /2)-Z4-C012-IRR | 2d | 2027-02-06 | 2027-02-07 | RHD4CZ4C012IRR1304 |
| RHD4CZ4C012IRR1504 |  | Backfilling and warning tape works for HDPE Pipline 315 mm - (RD-C-1 /2)-Z4-C012-IRR | 3d | 2027-02-08 | 2027-02-10 | RHD4CZ4C012IRR1404 |
|  | 6115 | **RHD4-02-002-C012-(IRR)-Gate Valves (Direct Buried)** |  | 2027-02-03 | 2027-02-07 |  |
| RHD4CZ4C012IRR3100 |  | Installation for Direct Buried Gate Valves - (RD-C-1 /2)-Z4-C012-IRR | 2d | 2027-02-03 | 2027-02-04 | RHD4CZ4C012IRR1304 SS, RHD4CZ4C012IRR1304 FF, RHD4CZ4C012IRR1300 SS, RHD4CZ4C012IRR1300 FF |
| RHD4CZ4C012IRR3200 |  | Stem and Service box for Direct Buried Gate Valves - (RD-C-1 /2)-Z4-C012-IRR | 2d | 2027-02-06 | 2027-02-07 | RHD4CZ4C012IRR3100, RHD4CZ4C012IRR1500 |
|  | 6116 | **RHD4-02-002-C012-(IRR)-Butterfly Valve Chamber** |  | 2027-02-02 | 2027-02-10 |  |
| RHD4CZ4C012IRR2100 |  | Excavation and Bedding for Butterfly Valve Chamber for Irrigation Network - (RD-C-1 /2)-Z4-C012-IRR | 2d | 2027-02-02 | 2027-02-03 | RHD4CZ4C012IRR1104, RHD4CZ4C012IRR1500 |
| RHD4CZ4C012IRR2200 |  | PC works for Butterfly Valve Chamber for Irrigation Network - (RD-C-1 /2)-Z4-C012-IRR | 2d | 2027-02-04 | 2027-02-06 | RHD4CZ4C012IRR2100 |
| RHD4CZ4C012IRR2300 |  | Installation for Butterfly Valve Chamber for Irrigation Network - (RD-C-1 /2)-Z4-C012-IRR | 2d | 2027-02-07 | 2027-02-08 | RHD4CZ4C012IRR2200 |
| RHD4CZ4C012IRR2400 |  | Backfilling works for Butterfly Valve Chamber for Irrigation Network - (RD-C-1 /2)-Z4-C012-IRR | 2d | 2027-02-09 | 2027-02-10 | RHD4CZ4C012IRR2300 |
|  | 6117 | **RHD4-02-002-C012-(IRR)-Butterfly Valves** |  | 2027-02-06 | 2027-02-13 |  |
| RHD4CZ4C012IRR3101 |  | Installation for Butterfly Valves for Irrigation Network - (RD-C-1 /2)-Z4-C012-IRR | 2d | 2027-02-06 | 2027-02-07 | RHD4CZ4C012IRR1304 |
| RHD4CZ4C012IRR3201 |  | Stem and Service box for Butterfly Valves for Irrigation Network - (RD-C-1 /2)-Z4-C012-IRR | 2d | 2027-02-11 | 2027-02-13 | RHD4CZ4C012IRR3101, RHD4CZ4C012IRR2400 |
|  | 2330 | **RHD4-02-002-C012-(IRR)-HDPE Pipes - 450 mm diameter** |  |  |  |  |
|  | 2339 | **RHD4-02-002-C012-(IRR)-Concrete Encasement** |  |  |  |  |
|  | 2357 | **RHD4-02-002-Z4-C012-Medium Voltage Network - MV** |  | 2027-01-14 | 2027-02-06 |  |
|  | 2358 | **RHD4-02-002-C012-(MV)-Medium Voltage cable trench** |  | 2027-01-14 | 2027-01-25 |  |

| ID | WBS | Task | Duration | Start | Finish | Predecessors |
| --- | --- | --- | --- | --- | --- | --- |
| RHD4CZ4C012MV1100 |  | Excavation for Medium Voltage Trench - (RD-C-1 /2)-Z4-C012-MV | 5d | 2027-01-14 | 2027-01-19 | RHD4ENSDZ4APPMV150, RHD4CZ4C012RD3100, RHD4CZ4L09MV1100 |
| RHD4CZ4C012MV1200 |  | Trench Backfilling for Medium Voltage Network - (RD-C-1 /2)-Z4-C012-MV | 5d | 2027-01-20 | 2027-01-25 | RHD4CZ4C012MV1100 |
|  | 1982 | **RHD4-02-002-C012-(MV)-Medium Voltage cables 3Cx 50 mm²** |  | 2027-01-20 | 2027-02-06 |  |
| RHD4CZ4C012MV3101 |  | Installation of Medium Voltage Cables 3Cx 50 mm² - (RD-C-1 /2)-Z4-C012-MV | 2d | 2027-01-20 | 2027-01-21 | RHD4CZ4C012RD3100, RHD4CZ4C012MV1100 |
| RHD4CZ4C012MV3301 |  | Testing of Medium Voltage Cables 3Cx 50 mm² - (RD-C-1 /2)-Z4-C012-MV | 2d | 2027-01-23 | 2027-01-24 | RHD4CZ4C012MV3101 |
| RHD4CZ4C012MV3401 |  | Termination of Medium Voltage Cables 3Cx 50 mm² - (RD-C-1 /2)-Z4-C012-MV | 2d | 2027-02-04 | 2027-02-06 | RHD4CZ4C012MV3301, RHD4CZ4C012MV5400 |
|  | 2359 | **RHD4-02-002-C012-(MV)-Medium Voltage duct banks** |  |  |  |  |
|  | 2360 | **RHD4-02-002-C012-(MV)-Medium Voltage cables 3Cx 500 mm²** |  | 2027-01-20 | 2027-02-04 |  |
| RHD4CZ4C012MV3100 |  | Installation of Medium Voltage Cables 3Cx 500 mm² - (RD-C-1 /2)-Z4-C012-MV | 6d | 2027-01-20 | 2027-01-26 | RHD4CZ4C012MV1100, RHD4PRSHLDOSMV1100, RHD4ENMSMV2000, RHD4ENMSMV2010, RHD4PRSHLSTAGMV1100 |
| RHD4CZ4C012MV3200 |  | Joints Installation of Medium Voltage Cables 3Cx 500 mm² - (RD-C-1 /2)-Z4-C012-MV | 2d | 2027-01-27 | 2027-01-28 | RHD4CZ4C012MV3100, RHD4PRSHLDOSMV1300, RHD4PRSHLSTAGMV1300 |
| RHD4CZ4C012MV3300 |  | Testing of Medium Voltage Cables 3Cx 500 mm² - (RD-C-1 /2)-Z4-C012-MV | 6d | 2027-01-30 | 2027-02-04 | RHD4CZ4C012MV3200, RHD4CZ4C012MV1200 |
|  | 1984 | **RHD4-02-002-C012-(MV)-Unit Substations** |  | 2027-01-26 | 2027-02-03 |  |
| RHD4CZ4C012MV5100 |  | Excavation for Unit Substations for Medium Voltage Network - (RD-C-1 /2)-Z4-C012-MV | 2d | 2027-01-26 | 2027-01-27 | RHD4CZ4C012MV1200 |
| RHD4CZ4C012MV5200 |  | Concrete Base Placement for Unit Substations for Medium Voltage Network - (RD-C-1 /2)-Z4-C012-MV | 2d | 2027-01-28 | 2027-01-30 | RHD4CZ4C012MV5100 |
| RHD4CZ4C012MV5300 |  | Installation for Fences and doors for Medium Voltage Network - (RD-C-1 /2)-Z4-C012-MV | 2d | 2027-01-31 | 2027-02-01 | RHD4CZ4C012MV5200 |
| RHD4CZ4C012MV5400 |  | Installation for Unit Substations for Medium Voltage Network - (RD-C-1 /2)-Z4-C012-MV | 2d | 2027-02-02 | 2027-02-03 | RHD4CZ4C012MV5300 |
|  | 5388 | **RHD4-02-002-C012-(MV)-Normally open Point (Outdoor Type)** |  |  |  |  |
|  | 2364 | **RHD4-02-002-Z4-C012-Low Voltage Network - LV** |  | 2027-02-06 | 2027-03-20 |  |
|  | 2367 | **RHD4-02-002-C012-(LV)-Low Voltage cables** |  | 2027-02-06 | 2027-02-18 |  |
| RHD4CZ4C012LV3100 |  | Excavation for Low Voltage Cables for Low Voltage Network - (RD-C-1 /2)-Z4-C012-LV | 4d | 2027-02-06 | 2027-02-09 | RHD4CZ4C012MV1200, RHD4ENSDZ4APPLV160, RHD4CZ4C012MV3300 |
| RHD4CZ4C012LV3200 |  | Cable Laying of Low Voltage Cables for Low Voltage Network - (RD-C-1 /2)-Z4-C012-LV | 3d | 2027-02-10 | 2027-02-13 | RHD4CZ4C012LV3100, RHD4PRSHLDOSLV1100, RHD4ENMSLV2000, RHD4ENMSLV2010, RHD4PRSHLSTAGLV1100 |
| RHD4CZ4C012LV3300 |  | Warning tape and Backfill for Low Voltage Cables for Low Voltage Network - (RD-C-1 /2)-Z4-C012-LV | 3d | 2027-02-14 | 2027-02-16 | RHD4CZ4C012LV3200 |
| RHD4CZ4C012LV3400 |  | Testing of Low Voltage Cables for Low Voltage Network - (RD-C-1 /2)-Z4-C012-LV | 2d | 2027-02-17 | 2027-02-18 | RHD4CZ4C012LV3300 |
|  | 4259 | **RHD4-02-002-C012-(LV)-Low Voltage Distribution Pillars** |  | 2027-02-20 | 2027-03-20 |  |
| RHD4CZ4C012LV4100 |  | Leveling for Distribution Pillars for Low Voltage Network - (RD-C-1 /2)-Z4-C012-LV | 2d | 2027-02-20 | 2027-02-21 | RHD4CZ4C012LV3400 |
| RHD4CZ4C012LV4200 |  | Lean Concrete for Distribution Pillars for Low Voltage Network - (RD-C-1 /2)-Z4-C012-LV | 2d | 2027-02-23 | 2027-02-24 | RHD4CZ4C012LV4100 |
| RHD4CZ4C012LV4300 |  | Installation of Distribution Pillars for Low Voltage Network - (RD-C-1 /2)-Z4-C012-LV | 2d | 2027-03-18 | 2027-03-20 | RHD4CZ4C012SL6100, RHD4CZ4C012LV4200 |
|  | 4260 | **RHD4-02-002-C012-(LV)-Low Voltage Distribution Pillars Earthing** |  |  |  |  |
|  | 2370 | **RHD4-02-002-Z4-C012-Street Lighting Network - SL** |  | 2027-01-26 | 2027-03-17 |  |
|  | 2371 | **RHD4-02-002-C012-(SL)-Street Lighting duct banks** |  | 2027-02-11 | 2027-02-20 |  |
| RHD4CZ4C012SL2100 |  | Excavation of Duct Banks for Street Lighting Network - (RD-C-1 /2)-Z4-C012-SL | 2d | 2027-02-11 | 2027-02-13 | RHD4ENSDZ4APPSL170, RHD4CZ4C012IRR2400 |
| RHD4CZ4C012SL2200 |  | Installation of Duct Banks for Street Lighting Network - (RD-C-1 /2)-Z4-C012-SL | 2d | 2027-02-14 | 2027-02-15 | RHD4CZ4C012SL2100 |
| RHD4CZ4C012SL2300 |  | Pouring of Duct Banks for Street Lighting Network - (RD-C-1 /2)-Z4-C012-SL | 2d | 2027-02-16 | 2027-02-17 | RHD4CZ4C012SL2200 |
| RHD4CZ4C012SL2400 |  | Backfilling of Duct Banks for Street Lighting Network - (RD-C-1 /2)-Z4-C012-SL | 2d | 2027-02-18 | 2027-02-20 | RHD4CZ4C012SL2300 |
|  | 2373 | **RHD4-02-002-C012-(SL)-Street Lighting cables** |  | 2027-01-26 | 2027-02-07 |  |
| RHD4CZ4C012SL3100 |  | Excavation for Street Lighting Cables for Street Lighting Network - (RD-C-1 /2)-Z4-C012-SL | 3d | 2027-01-26 | 2027-01-28 | RHD4ENSDZ4APPSL170, RHD4CZ4C012MV1200 |
| RHD4CZ4C012SL3200 |  | Cable Laying of Street Lighting Cables for Street Lighting Network - (RD-C-1 /2)-Z4-C012-SL | 3d | 2027-01-30 | 2027-02-01 | RHD4CZ4C012SL3100, RHD4ENMSSL2000, RHD4ENMSSL2010 |
| RHD4CZ4C012SL3300 |  | Warning tape and Backfill for Street Lighting Cables for Street Lighting Network - (RD-C-1 /2)-Z4-C012-SL | 3d | 2027-02-02 | 2027-02-04 | RHD4CZ4C012SL3200 |
| RHD4CZ4C012SL3400 |  | Testing of Street Lighting Cables for Street Lighting Network - (RD-C-1 /2)-Z4-C012-SL | 2d | 2027-02-06 | 2027-02-07 | RHD4CZ4C012SL3300 |
|  | 2374 | **RHD4-02-002-C012-(SL)-Street Lighting Poles** |  | 2027-02-21 | 2027-03-04 |  |
| RHD4CZ4C012SL1100 |  | Excavation for RC Base for Lighting Poles for Street Lighting Network - (RD-C-1 /2)-Z4-C012-SL | 2d | 2027-02-21 | 2027-02-23 | RHD4CZ4C012SL2400, RHD4CZ4C012MV1200, RHD4ENSDZ4APPSL170 |
| RHD4CZ4C012SL1200 |  | Installation for RC Base for Lighting Poles for Street Lighting Network - (RD-C-1 /2)-Z4-C012-SL | 2d | 2027-02-24 | 2027-02-25 | RHD4CZ4C012SL1100 |
| RHD4CZ4C012SL1300 |  | Backfill for RC Base for Lighting Poles for Street Lighting Network - (RD-C-1 /2)-Z4-C012-SL | 2d | 2027-02-27 | 2027-02-28 | RHD4CZ4C012SL1200 |
| RHD4CZ4C012SL1400 |  | Installation for Lighting Poles for Street Lighting Network - (RD-C-1 /2)-Z4-C012-SL | 2d | 2027-03-01 | 2027-03-02 | RHD4CZ4C012SL1300, RHD4PRSHLDOSSL1200, RHD4ENMSSL2000, RHD4ENMSSL2010, RHD4PRSHLSTAGSL1200 |
| RHD4CZ4C012SL1500 |  | Luminaire Installation for Lighting Poles for Street Lighting Network - (RD-C-1 /2)-Z4-C012-SL | 2d | 2027-03-03 | 2027-03-04 | RHD4CZ4C012SL1400, RHD4PRSHLDOSSL1300, RHD4PRSHLSTAGSL1300 |
|  | 5023 | **RHD4-02-002-C012-(SL)-Street Lighting Feeder Pillars** |  | 2027-03-06 | 2027-03-15 |  |
| RHD4CZ4C012SL4100 |  | Leveling for Distribution Pillars for Street Lighting Network - (RD-C-1 /2)-Z4-C012-SL | 2d | 2027-03-06 | 2027-03-07 | RHD4CZ4C012SL1500 |
| RHD4CZ4C012SL4200 |  | Lean Concrete for Distribution Pillars for Street Lighting Network - (RD-C-1 /2)-Z4-C012-SL | 2d | 2027-03-08 | 2027-03-13 | RHD4CZ4C012SL4100 |
| RHD4CZ4C012SL4300 |  | Installation of Distribution Pillars for Street Lighting Network - (RD-C-1 /2)-Z4-C012-SL | 2d | 2027-03-14 | 2027-03-15 | RHD4CZ4C012SL4200 |
|  | 5024 | **RHD4-02-002-C012-(SL)-Street Lighting Earthing System** |  | 2027-03-16 | 2027-03-17 |  |
| RHD4CZ4C012SL6100 |  | Installation of Earthing for Lighting Poles and Fedder Pillers for Street Lighting Network - (RD-C-1 /2)-Z4-C012-SL | 2d | 2027-03-16 | 2027-03-17 | RHD4CZ4C012MV3401, RHD4CZ4C012SL4300 |
|  | 2372 | **RHD4-02-002-C012-(SL)-Street Lighting Drawpit** |  | 2027-02-24 | 2027-02-28 |  |
| RHD4CZ4C012SL5100 |  | Excavation of Drawpit size 600x600x900mm for Street Lighting Network - (RD-C-1 /2)-Z4-C012-SL | 2d | 2027-02-24 | 2027-02-25 | RHD4CZ4C012SL2300, RHD4ENSDZ4APPSL170, RHD4CZ4C012SL1100, RHD4CZ4C012SL3400 |
| RHD4CZ4C012SL5200 |  | Installation of Drawpit size 600x600x900mm for Street Lighting Network - (RD-C-1 /2)-Z4-C012-SL | 2d | 2027-02-27 | 2027-02-28 | RHD4CZ4C012SL5100, RHD4PRSHLDOSSL1400, RHD4PRSHLSTAGSL1400, RHD4CZ4C012IRR3200 |
|  | 2382 | **RHD4-02-002-Z4-C012-Telecommunications Network - TC** |  | 2027-03-01 | 2027-03-15 |  |
|  | 2383 | **RHD4-02-002-C012-(TC)-Telecommunications Ducts** |  | 2027-03-01 | 2027-03-15 |  |
| RHD4CZ4C012TC2100 |  | Excavation of HDPE Ducts for Telecom Network - (RD-C-1 /2)-Z4-C012-TC | 3d | 2027-03-01 | 2027-03-03 | RHD4ENSDZ4APPTC190, RHD4CZ4C012SL5100, RHD4CZ4C012SL5200 |
| RHD4CZ4C012TC2200 |  | Installation of HDPE Ducts for Telecom Network - (RD-C-1 /2)-Z4-C012-TC | 4d | 2027-03-04 | 2027-03-08 | RHD4CZ4C012TC2100, RHD4PRSHLDOSTC1000, RHD4PRSHLSTAGTC1000 |
| RHD4CZ4C012TC2400 |  | Backfilling of HDPE Ducts for Telecom Network - (RD-C-1 /2)-Z4-C012-TC | 3d | 2027-03-13 | 2027-03-15 | RHD4CZ4C012TC2200, RHD4CZ4C012TC5200 |
|  | 2384 | **RHD4-02-002-C012-(TC)-Telecommunications Manholes** |  | 2027-03-04 | 2027-03-08 |  |
| RHD4CZ4C012TC5100 |  | Excavation for Manholes for Telecom Network - (RD-C-1 /2)-Z4-C012-TC | 2d | 2027-03-04 | 2027-03-06 | RHD4CZ4C012TC2100, RHD4ENSDZ4APPTC190 |
| RHD4CZ4C012TC5200 |  | Installation of Manholes for Telecom Network - (RD-C-1 /2)-Z4-C012-TC | 2d | 2027-03-07 | 2027-03-08 | RHD4CZ4C012TC5100, RHD4CZ4C012TC2200 SS, RHD4PRSHLDOSTC1200, RHD4PRSHLSTAGTC1200 |
|  | 2385 | **RHD4-02-002-C012-(TC)-Telecomminications Road Crossings** |  |  |  |  |
|  | 2386 | **RHD4-02-002-Z4-C012-Information and Communication Technologies - ICT** |  | 2026-08-18 | 2027-04-08 |  |
|  | 2387 | **RHD4-02-002-C012-(ICT)-Information and Communication Technologies Ducts** |  | 2027-03-04 | 2027-04-08 |  |
| RHD4CZ4C012ICT2100 |  | Excavation of HDPE Ducts for ICT Network - (RD-C-1 /2)-Z4-C012-ICT | 8d | 2027-03-04 | 2027-03-16 | RHD4CZ4C012ICT3400, RHD4ENSDZ4APPICT200, RHD4CZ4C012TC2100 |
| RHD4CZ4C012ICT2200 |  | Installation of HDPE Ducts for ICT Network - (RD-C-1 /2)-Z4-C012-ICT | 12d | 2027-03-17 | 2027-03-30 | RHD4CZ4C012ICT2100, RHD4PRSHLDOSICT1000, RHD4PRSHLSTAGICT1000 |
| RHD4CZ4C012ICT2400 |  | Backfilling of HDPE Ducts for ICT Network - (RD-C-1 /2)-Z4-C012-ICT | 8d | 2027-03-31 | 2027-04-08 | RHD4CZ4C012ICT2200, RHD4CZ4C012ICT5200 |
|  | 2388 | **RHD4-02-002-C012-(ICT)-Information and Communication Technologies Manholes** |  | 2027-03-17 | 2027-03-21 |  |
| RHD4CZ4C012ICT5100 |  | Excavation for Manholes for ICT Network - (RD-C-1 /2)-Z4-C012-ICT | 2d | 2027-03-17 | 2027-03-18 | RHD4CZ4C012ICT2100, RHD4ENSDZ4APPICT200, RHD4CZ4C012TC5200 |

| ID | WBS | Task | Duration | Start | Finish | Predecessors |
| --- | --- | --- | --- | --- | --- | --- |
| RHD4CZ4C012ICT5200 |  | Installation of Manholes for ICT Network - (RD-C-1 /2)-Z4-C012-ICT | 2d | 2027-03-20 | 2027-03-21 | RHD4CZ4C012ICT5100, RHD4PRSHLDOSICT1200, RHD4PRSHLSTAGICT1200 |
|  | 2389 | **RHD4-02-002-C012-(ICT)-Information and Communication Technologies Road Crossings** |  | 2026-08-18 | 2026-08-26 |  |
| RHD4CZ4C012ICT3100 |  | Excavation for Road Crossings for ICT Network - (RD-C-1 /2)-Z4-C012-ICT | 2d | 2026-08-18 | 2026-08-19 | RHD4ENSDZ4APPICT200, RHD4CZ4L09ST3102 |
| RHD4CZ4C012ICT3200 |  | Installation of Road Crossings for ICT Network - (RD-C-1 /2)-Z4-C012-ICT | 2d | 2026-08-20 | 2026-08-22 | RHD4CZ4C012ICT3100, RHD4PRSHLDOSICT1100, RHD4PRSHLSTAGICT1100 |
| RHD4CZ4C012ICT3300 |  | Pouring of Road Crossings for ICT Network - (RD-C-1 /2)-Z4-C012-ICT | 2d | 2026-08-23 | 2026-08-24 | RHD4CZ4C012ICT3200 |
| RHD4CZ4C012ICT3400 |  | Backfilling of Road Crossings for ICT Network - (RD-C-1 /2)-Z4-C012-ICT | 2d | 2026-08-25 | 2026-08-26 | RHD4CZ4C012ICT3300 |
|  | 2377 | **RHD4-02-002-Z4-C012-Landscape Network - LS** |  |  |  |  |
|  | 2378 | **RHD4-02-002-C012-(LS)-Landscape Lighting cables** |  |  |  |  |
|  | 2379 | **RHD4-02-002-C012-(LS)-Landscape Feeder Pillars** |  |  |  |  |
|  | 2380 | **RHD4-02-002-C012-(LS)-Landscape Bollard Poles** |  |  |  |  |
|  | 2381 | **RHD4-02-002-C012-(LS)-Landscape Feeder Pillars Earthing** |  |  |  |  |
|  | 2390 | **RHD4-02-002-Z4-C012-Security Network - CCTV** |  |  |  |  |
|  | 2391 | **RHD4-02-002-C012-(CCTV)-Civil Works** |  |  |  |  |
|  | 7324 | **RHD4-02-002-Z8** |  | 2026-08-18 | 2028-04-02 |  |
|  | 7703 | **RHD4-02-002-Z8-A011** |  | 2026-08-18 | 2027-11-11 |  |
|  | 7778 | **RHD4-02-002-Z8-A011-Crossings Potable Network - PTCr** |  |  |  |  |
|  | 7782 | **RHD4-02-002-A011-(PTCr)-HDPE Pipes - 400 mm diameter** |  |  |  |  |
|  | 7785 | **RHD4-02-002-A011-(PTCr)-Butterfly Valve Chamber** |  |  |  |  |
|  | 7786 | **RHD4-02-002-A011-(PTCr)-Butterfly Valves** |  |  |  |  |
|  | 7789 | **RHD4-02-002-A011-(PTCr)-Air Valve Chambers** |  |  |  |  |
|  | 7790 | **RHD4-02-002-A011-(PTCr)-Air Valves** |  |  |  |  |
|  | 7791 | **RHD4-02-002-A011-(PTCr)-Fire Hydrant** |  |  |  |  |
|  | 7825 | **RHD4-02-002-Z8-A011-Crossings Irrigation Network - IRRC** |  |  |  |  |
|  | 7826 | **RHD4-02-002-A011-(IRRC)-HDPE Pipes - 160 mm diameter** |  |  |  |  |
|  | 7833 | **RHD4-02-002-A011-(IRRC)-HDPE Pipes - 500 mm diameter** |  |  |  |  |
|  | 7834 | **RHD4-02-002-A011-(IRRC)-Gate Valves (Direct Buried)** |  |  |  |  |
|  | 7835 | **RHD4-02-002-A011-(IRRC)-Butterfly Valve Chamber** |  |  |  |  |
|  | 7836 | **RHD4-02-002-A011-(IRRC)-Butterfly Valves** |  |  |  |  |
|  | 7839 | **RHD4-02-002-A011-(IRRC)-Air Valve Chamber** |  |  |  |  |
|  | 7840 | **RHD4-02-002-A011-(IRRC)-Air Valves** |  |  |  |  |
|  | 7882 | **RHD4-02-002-Z8-A011-Road Works - RD** |  | 2026-08-27 | 2027-11-11 |  |
|  | 7883 | **RHD4-02-002-A011-(RD)-Subgrade** |  | 2026-08-27 | 2026-09-01 |  |
| RHD4CZ8A011RD1100 |  | Supply, lay and compaction subgrade compacted thickness 300 mm for Roads - (RD-A-1 /1)-Z8-A011-RD | 5d | 2026-08-27 | 2026-09-01 | RHD4ENSDZ8APPRD220, RHD4ENSDZ8APPEW100 SS, RHD4CZ8A011TC3400 |
|  | 7884 | **RHD4-02-002-A011-(RD)-Aggregate Base Course** |  | 2026-09-02 | 2026-09-08 |  |
| RHD4CZ8A011RD2100 |  | Supply, lay and compaction Aggregate base course compacted thickness 300 mmfor Roads - (RD-A-1 /1)-Z8-A011-RD | 6d | 2026-09-02 | 2026-09-08 | RHD4PRSHLDOSRD1000, RHD4PRSHLSTAGRD1000, RHD4CZ8A011RD1100 |
|  | 7885 | **RHD4-02-002-A011-(RD)-Bituminous base course Two Layers, including (MC1)&(RC2)** |  | 2026-09-09 | 2027-10-28 |  |
| RHD4CZ8A011RD3100 |  | Supply, lay and Asphaltic base course including Prime Coat (MC1) for 1st Layer - (RD-A-1 /1)-Z8-A011-RD | 3d | 2026-09-09 | 2026-09-12 | RHD4PRSHLDOSRD1100, RHD4ENMSASPH2000, RHD4ENMSASPH2010, RHD4PRSHLSTAGRD1100, RHD4CZ8A011RD2100, RHD4CZ6A015RD3100 |
| RHD4CZ8A011RD3200 |  | Supply, lay and Asphaltic base course including Tack Coat (RC2) for 2nd Layer - (RD-A-1 /1)-Z8-A011-RD | 6d | 2027-10-23 | 2027-10-28 | RHD4PRSHLDOSRD1100, RHD4PRSHLSTAGRD1100, RHD4CZ8A011CCTV6100 |
|  | 7887 | **RHD4-02-002-A011-(RD)-Precast Concrete Curb** |  | 2027-10-30 | 2027-11-02 |  |
| RHD4CZ8A011RD5100 |  | Supply and installation Precast Concrete Kerb for Roads - (RD-A-1 /1)-Z8-A011-RD | 4d | 2027-10-30 | 2027-11-02 | RHD4PRSHLDOSRD1200, RHD4ENMSRD2000, RHD4ENMSRD2010, RHD4PRSHLSTAGRD1200, RHD4CZ8A011RD3200 |
|  | 7890 | **RHD4-02-002-A011-(RD)-Traffic Signage** |  | 2027-11-03 | 2027-11-09 |  |
| RHD4CZ8A011RD8100 |  | Installation of Traffic Signage for Road Network - (RD-A-1 /1)-Z8-A011-RD | 6d | 2027-11-03 | 2027-11-09 | RHD4PRSHLDOSRD1600, RHD4PRSHLSTAGRD1600, RHD4CZ8A011RD5100, RHD4CZ8A011PT2401 |
|  | 7888 | **RHD4-02-002-A011-(RD)-Precast Interlocking Block Pavers** |  |  |  |  |
|  | 7886 | **RHD4-02-002-A011-(RD)-Bituminous concrete wearing course including tack coat (RC2)** |  | 2027-11-03 | 2027-11-06 |  |
| RHD4CZ8A011RD4100 |  | Supply, lay and compaction Asphaltic wearing course including tack Coat (RC2)for Road Network - (RD-A-1 /1)-Z8-A011-RD | 3d | 2027-11-03 | 2027-11-06 | RHD4CZ8A011RD5100 |
|  | 7889 | **RHD4-02-002-A011-(RD)-Pavement Marking** |  | 2027-11-07 | 2027-11-11 |  |
| RHD4CZ8A011RD7100 |  | Pavement Markings for Road Network - (RD-A-1 /1)-Z8-A011-RD | 5d | 2027-11-07 | 2027-11-11 | RHD4PRSHLDOSRD1500, RHD4PRSHLSTAGRD1500, RHD4CZ8A011RD4100, RHD4CZ7RA03RD7100 |
|  | 7707 | **RHD4-02-002-Z8-A011-Storm Network - ST** |  | 2026-10-17 | 2026-12-22 |  |
|  | 7725 | **RHD4-02-002-A011-(ST)-MH Works - 1500 mm diameter** |  | 2026-11-24 | 2026-12-17 |  |
| RHD4CZ8A011ST3101 |  | Excavation and PC Blinding works for MH 1500 mm - (RD-A-1 /1)-Z8-A011-ST | 5d | 2026-11-24 | 2026-11-29 | RHD4ENSDZ8APPST110, RHD4ENMSST2000, RHD4CZ8A011RW3000, RHD4CZ8A011RD1100, RHD4CZ8A011ST3102 |
| RHD4CZ8A011ST3201 |  | Installation of Base for MH 1500 mm - (RD-A-1 /1)-Z8-A011-ST | 2d | 2026-11-30 | 2026-12-01 | RHD4PRSHLSTAGST1607, RHD4CZ8A011ST3101 |
| RHD4CZ8A011ST3301 |  | MH Ring and C.Slab works and Backfilling works for MH 1500 mm - (RD-A-1 /1)-Z8-A011-ST | 5d | 2026-12-02 | 2026-12-07 | RHD4PRSHLDOSST1607, RHD4CZ8A011ST3201 |
| RHD4CZ8A011ST3401 |  | Steel Cover for MH 1500 mm - (RD-A-1 /1)-Z8-A011-ST | 4d | 2026-12-08 | 2026-12-12 | RHD4PRSHLDOSST1707, RHD4PRSHLSTAGST1707, RHD4CZ8A011ST3301 |
| RHD4CZ8A011ST3501 |  | Finishing, Benching, Testing works for MH 1500 mm - (RD-A-1 /1)-Z8-A011-ST | 5d | 2026-12-13 | 2026-12-17 | RHD4CZ8A011ST3401 |
|  | 3754 | **RHD4-02-002-A011-(ST)-MH Works - 2000 mm diameter** |  | 2026-11-19 | 2026-12-10 |  |
| RHD4CZ8A011ST3102 |  | Excavation and PC Blinding works for MH 2000 mm - (RD-A-1 /1)-Z8-A011-ST | 4d | 2026-11-19 | 2026-11-23 | RHD4CZ8A011RD1100, RHD4CZ8A011ST2100 |
| RHD4CZ8A011ST3202 |  | Installation of Base for MH 2000 mm - (RD-A-1 /1)-Z8-A011-ST | 4d | 2026-11-24 | 2026-11-28 | RHD4CZ8A011ST3102 |
| RHD4CZ8A011ST3302 |  | MH Ring and C.Slab works and Backfilling works for MH 2000 mm - (RD-A-1 /1)-Z8-A011-ST | 4d | 2026-11-29 | 2026-12-02 | RHD4CZ8A011ST3202 |
| RHD4CZ8A011ST3402 |  | Steel Cover for MH 2000 mm - (RD-A-1 /1)-Z8-A011-ST | 3d | 2026-12-03 | 2026-12-06 | RHD4CZ8A011ST3302 |
| RHD4CZ8A011ST3502 |  | Finishing, Benching, Testing works for MH 2000 mm - (RD-A-1 /1)-Z8-A011-ST | 4d | 2026-12-07 | 2026-12-10 | RHD4CZ8A011ST3402 |
|  | 6393 | **RHD4-02-002-A011-(ST)-GRP Pipes - 1300 mm diameter** |  | 2026-10-17 | 2026-10-31 |  |
| RHD4CZ8A011ST1109 |  | Excavation works for GRP Pipe Line 1300 mm - (RD-A-1 /1)-Z8-A011-ST | 3d | 2026-10-17 | 2026-10-19 | RHD4CZ8A011RD1100, RHD4CZ6A015IRR1100, RHD4CZ4L09RD3100, RHD4CZ8A011RD3100 |
| RHD4CZ8A011ST1209 |  | Bedding works for GRP Pipe Line 1300 mm - (RD-A-1 /1)-Z8-A011-ST | 3d | 2026-10-20 | 2026-10-22 | RHD4CZ8A011ST1109 |
| RHD4CZ8A011ST1309 |  | Installing for GRP Pipe Line 1300 mm - (RD-A-1 /1)-Z8-A011-ST | 2d | 2026-10-24 | 2026-10-25 | RHD4CZ8A011ST1209 |
| RHD4CZ8A011ST1409 |  | Primary Test for GRP Pipe Line 1300 mm - (RD-A-1 /1)-Z8-A011-ST | 2d | 2026-10-26 | 2026-10-27 | RHD4CZ8A011ST1309 |
| RHD4CZ8A011ST1509 |  | Backfilling and warning tape works for GRP Pipe Line 1300 mm - (RD-A-1 /1)-Z8-A011-ST | 3d | 2026-10-28 | 2026-10-31 | RHD4CZ8A011ST1409 |
|  | 7724 | **RHD4-02-002-A011-(ST)-MH Works - 1200 mm diameter** |  | 2026-11-30 | 2026-12-22 |  |
| RHD4CZ8A011ST3100 |  | Excavation and PC Blinding works for MH 1200 mm - (RD-A-1 /1)-Z8-A011-ST | 4d | 2026-11-30 | 2026-12-03 | RHD4ENSDZ8APPST110, RHD4ENMSST2000, RHD4ENMSST2010, RHD4CZ8A011RD1100, RHD4CZ8A011ST1109, RHD4CZ8A011ST3101 |
| RHD4CZ8A011ST3200 |  | Installation of Base for MH 1200 mm - (RD-A-1 /1)-Z8-A011-ST | 4d | 2026-12-05 | 2026-12-08 | RHD4PRSHLSTAGST1607, RHD4CZ8A011ST3100 |
| RHD4CZ8A011ST3300 |  | MH Ring and C.Slab works and Backfilling works for MH 1200 mm - (RD-A-1 /1)-Z8-A011-ST | 4d | 2026-12-09 | 2026-12-13 | RHD4PRSHLDOSST1607, RHD4CZ8A011ST3200 |

| ID | WBS | Task | Duration | Start | Finish | Predecessors |
| --- | --- | --- | --- | --- | --- | --- |
| RHD4CZ8A011ST3400 |  | Steel Cover for MH 1200 mm - (RD-A-1 /1)-Z8-A011-ST | 4d | 2026-12-14 | 2026-12-17 | RHD4PRSHLDOSST1707, RHD4PRSHLSTAGST1707, RHD4CZ8A011ST3300 |
| RHD4CZ8A011ST3500 |  | Finishing, Benching, Testing works for MH 1200 mm - (RD-A-1 /1)-Z8-A011-ST | 4d | 2026-12-19 | 2026-12-22 | RHD4CZ8A011ST3400 |
|  | 7713 | **RHD4-02-002-A011-(ST)-GRP Pipes - 900 mm diameter** |  |  |  |  |
|  | 7712 | **RHD4-02-002-A011-(ST)-GRP Pipes - 800 mm diameter** |  | 2026-10-20 | 2026-11-03 |  |
| RHD4CZ8A011ST1104 |  | Excavation works for GRP Pipe Line 800 mm - (RD-A-1 /1)-Z8-A011-ST | 3d | 2026-10-20 | 2026-10-22 | RHD4ENSDZ8APPST110, RHD4CZ8A011RD1100, RHD4CZ8A011ST1109 |
| RHD4CZ8A011ST1204 |  | Bedding works for GRP Pipe Line 800 mm - (RD-A-1 /1)-Z8-A011-ST | 3d | 2026-10-24 | 2026-10-26 | RHD4CZ8A011ST1104 |
| RHD4CZ8A011ST1304 |  | Installing for GRP Pipe Line 800 mm - (RD-A-1 /1)-Z8-A011-ST | 2d | 2026-10-27 | 2026-10-28 | RHD4PRSHLSTAGST1007, RHD4CZ8A011ST1204, RHD4PRSHLDOSST1607, RHD4PRSHLPOST1000, RHD4PRSHLDOSST1007 |
| RHD4CZ8A011ST1404 |  | Primary Test for GRP Pipe Line 800 mm - (RD-A-1 /1)-Z8-A011-ST | 2d | 2026-10-29 | 2026-10-31 | RHD4CZ8A011ST1304 |
| RHD4CZ8A011ST1504 |  | Backfilling and warning tape works for GRP Pipe Line 800 mm - (RD-A-1 /1)-Z8-A011-ST | 3d | 2026-11-01 | 2026-11-03 | RHD4CZ8A011ST1404 |
|  | 7711 | **RHD4-02-002-A011-(ST)-GRP Pipes - 700 mm diameter** |  | 2026-10-24 | 2026-11-05 |  |
| RHD4CZ8A011ST1103 |  | Excavation works for GRP Pipe Line 700 mm - (RD-A-1 /1)-Z8-A011-ST | 2d | 2026-10-24 | 2026-10-25 | RHD4ENSDZ8APPST110, RHD4CZ8A011RD1100, RHD4CZ8A011ST1104 |
| RHD4CZ8A011ST1203 |  | Bedding works for GRP Pipe Line 700 mm - (RD-A-1 /1)-Z8-A011-ST | 2d | 2026-10-26 | 2026-10-27 | RHD4CZ8A011ST1103 |
| RHD4CZ8A011ST1303 |  | Installing for GRP Pipe Line 700 mm - (RD-A-1 /1)-Z8-A011-ST | 2d | 2026-10-29 | 2026-10-31 | RHD4PRSHLSTAGST1007, RHD4CZ8A011ST1203, RHD4CZ8A011ST1304, RHD4PRSHLDOSST1607, RHD4PRSHLPOST1000, RHD4PRSHLDOSST1007 |
| RHD4CZ8A011ST1403 |  | Primary Test for GRP Pipe Line 700 mm - (RD-A-1 /1)-Z8-A011-ST | 2d | 2026-11-01 | 2026-11-02 | RHD4CZ8A011ST1303 |
| RHD4CZ8A011ST1503 |  | Backfilling and warning tape works for GRP Pipe Line 700 mm - (RD-A-1 /1)-Z8-A011-ST | 2d | 2026-11-04 | 2026-11-05 | RHD4CZ8A011ST1403, RHD4CZ8A011ST1504 |
|  | 7710 | **RHD4-02-002-A011-(ST)-GRP Pipes - 600 mm diameter** |  | 2026-10-26 | 2026-11-07 |  |
| RHD4CZ8A011ST1102 |  | Excavation works for GRP Pipe Line 600 mm - (RD-A-1 /1)-Z8-A011-ST | 2d | 2026-10-26 | 2026-10-27 | RHD4ENSDZ8APPST110, RHD4CZ8A011RD1100, RHD4CZ8A011ST1103 |
| RHD4CZ8A011ST1202 |  | Bedding works for GRP Pipe Line 600 mm - (RD-A-1 /1)-Z8-A011-ST | 2d | 2026-10-28 | 2026-10-29 | RHD4CZ8A011ST1102 |
| RHD4CZ8A011ST1302 |  | Installing for GRP Pipe Line 600 mm - (RD-A-1 /1)-Z8-A011-ST | 2d | 2026-11-01 | 2026-11-02 | RHD4PRSHLSTAGST1007, RHD4CZ8A011ST1202, RHD4CZ8A011ST1303, RHD4PRSHLDOSST1607, RHD4PRSHLPOST1000, RHD4PRSHLDOSST1007 |
| RHD4CZ8A011ST1402 |  | Primary Test for GRP Pipe Line 600 mm - (RD-A-1 /1)-Z8-A011-ST | 2d | 2026-11-03 | 2026-11-04 | RHD4CZ8A011ST1302 |
| RHD4CZ8A011ST1502 |  | Backfilling and warning tape works for GRP Pipe Line 600 mm - (RD-A-1 /1)-Z8-A011-ST | 2d | 2026-11-05 | 2026-11-07 | RHD4CZ8A011ST1402 |
|  | 7709 | **RHD4-02-002-A011-(ST)-GRP Pipes - 500 mm diameter** |  | 2026-10-28 | 2026-11-09 |  |
| RHD4CZ8A011ST1101 |  | Excavation works for GRP Pipe Line 500 mm - (RD-A-1 /1)-Z8-A011-ST | 2d | 2026-10-28 | 2026-10-29 | RHD4ENSDZ8APPST110, RHD4CZ8A011RD1100, RHD4CZ8A011ST1102 |
| RHD4CZ8A011ST1201 |  | Bedding works for GRP Pipe Line 500 mm - (RD-A-1 /1)-Z8-A011-ST | 2d | 2026-10-31 | 2026-11-01 | RHD4CZ8A011ST1101 |
| RHD4CZ8A011ST1301 |  | Installing for GRP Pipe Line 500 mm - (RD-A-1 /1)-Z8-A011-ST | 2d | 2026-11-03 | 2026-11-04 | RHD4PRSHLSTAGST1007, RHD4CZ8A011ST1201, RHD4CZ8A011ST1302, RHD4PRSHLDOSST1607, RHD4PRSHLPOST1000, RHD4PRSHLDOSST1007 |
| RHD4CZ8A011ST1401 |  | Primary Test for GRP Pipe Line 500 mm - (RD-A-1 /1)-Z8-A011-ST | 2d | 2026-11-05 | 2026-11-07 | RHD4CZ8A011ST1301, RHD4CZ9C071ST1502 |
| RHD4CZ8A011ST1501 |  | Backfilling and warning tape works for GRP Pipe Line 500 mm - (RD-A-1 /1)-Z8-A011-ST | 2d | 2026-11-08 | 2026-11-09 | RHD4CZ8A011ST1401 |
|  | 7708 | **RHD4-02-002-A011-(ST)-GRP Pipes - 400 mm diameter** |  | 2026-11-10 | 2026-11-21 |  |
| RHD4CZ8A011ST1100 |  | Excavation works for GRP Pipe Line 400 mm - (RD-A-1 /1)-Z8-A011-ST | 2d | 2026-11-10 | 2026-11-11 | RHD4ENSDZ8APPST110, RHD4CZ8A011RD1100, RHD4CZ8A011ST1101, RHD4CZ8A011ST1501 |
| RHD4CZ8A011ST1200 |  | Bedding works for GRP Pipe Line 400 mm - (RD-A-1 /1)-Z8-A011-ST | 2d | 2026-11-12 | 2026-11-14 | RHD4CZ8A011ST1100 |
| RHD4CZ8A011ST1300 |  | Installing for GRP Pipe Line 400 mm - (RD-A-1 /1)-Z8-A011-ST | 2d | 2026-11-15 | 2026-11-16 | RHD4PRSHLSTAGST1007, RHD4CZ8A011ST1200, RHD4CZ8A011ST1301, RHD4PRSHLDOSST1607, RHD4PRSHLPOST1000, RHD4PRSHLDOSST1007 |
| RHD4CZ8A011ST1400 |  | Primary Test for GRP Pipe Line 400 mm - (RD-A-1 /1)-Z8-A011-ST | 2d | 2026-11-17 | 2026-11-18 | RHD4CZ8A011ST1300 |
| RHD4CZ8A011ST1500 |  | Backfilling and warning tape works for GRP Pipe Line 400 mm - (RD-A-1 /1)-Z8-A011-ST | 2d | 2026-11-19 | 2026-11-21 | RHD4CZ8A011ST1400 |
|  | 7722 | **RHD4-02-002-A011-(ST)-UPVC Pipes - 300 mm diameter** |  | 2026-11-12 | 2026-12-14 |  |
| RHD4CZ8A011ST2100 |  | Excavation works for UPVC Pipe Line 300 mm - (RD-A-1 /1)-Z8-A011-ST | 6d | 2026-11-12 | 2026-11-18 | RHD4ENSDZ8APPST110, RHD4CZ8A011RD1100, RHD4CZ8A011ST1100 |
| RHD4CZ8A011ST2200 |  | Bedding works for UPVC Pipe Line 300 mm - (RD-A-1 /1)-Z8-A011-ST | 5d | 2026-11-19 | 2026-11-24 | RHD4CZ8A011ST2100 |
| RHD4CZ8A011ST2300 |  | Installing for UPVC Pipe Line 300 mm - (RD-A-1 /1)-Z8-A011-ST | 6d | 2026-11-25 | 2026-12-01 | RHD4PRSHLDOSST1107, RHD4PRSHLDOSRD1000, RHD4PRSHLDOSSW1107, RHD4PRSHLDOSSW1308, RHD4PRSHLDOSST1204, RHD4PRSHLSTAGST1107, RHD4PRSHLSTAGRD1000, RHD4CZ9L05RW2000, RHD4CZ9L06RW2000, RHD4CZ8A011ST2200, RHD4ENMSEW2000, RHD4ENMSEW2010, RHD4ENSDZ9APPEW100 SS, RHD4CZ9L05RW1000, RHD4CZ9L06RW1000 |
| RHD4CZ8A011ST2400 |  | Primary Test for UPVC Pipe Line 300 mm - (RD-A-1 /1)-Z8-A011-ST | 4d | 2026-12-02 | 2026-12-06 | RHD4CZ8A011ST2300 |
| RHD4CZ8A011ST2500 |  | Backfilling and warning tape works for UPVC Pipe Line 300 mm - (RD-A-1 /1)-Z8-A011-ST | 7d | 2026-12-07 | 2026-12-14 | RHD4CZ8A011ST2400, RHD4CZ8A011ST6100 |
|  | 7730 | **RHD4-02-002-A011-(ST)-Concrete Encasement** |  | 2026-11-30 | 2026-12-01 |  |
| RHD4CZ8A011ST6100 |  | Pipe Encasement for Storm Pipelines - (RD-A-1 /1)-Z8-A011-ST | 2d | 2026-11-30 | 2026-12-01 | RHD4CZ8A011ST2300 SS, RHD4CZ8A011ST2300 FF, RHD4CZ8A011ST2200, RHD4CZ8A011MV2400 |
|  | 7731 | **RHD4-02-002-Z8-A011-Catch Basin - ST** |  | 2026-11-12 | 2027-03-23 |  |
|  | 7732 | **RHD4-02-002-A011-(ST)-Single Catch Basin Works** |  | 2026-11-12 | 2027-03-23 |  |
| RHD4CZ8A011ST7100 |  | Excavation works for Single Catch Basin - (RD-A-1 /1)-Z8-A011-ST | 6d | 2026-11-12 | 2026-11-18 | RHD4ENSDZ8APPST110, RHD4CZ8A011RD1100, RHD4CZ8A011ST2100 SS |
| RHD4CZ8A011ST7200 |  | PC Blinding, Installation and Pipe connection for Single Catch Basin - (RD-A-1 /1)-Z8-A011-ST | 6d | 2026-11-19 | 2026-11-25 | RHD4CZ8A011ST7100 |
| RHD4CZ8A011ST7300 |  | Rings & C.Slab & Final Backfill for Single Catch Basin - (RD-A-1 /1)-Z8-A011-ST | 7d | 2026-11-26 | 2026-12-03 | RHD4PRSHLDOSST1307, RHD4PRSHLSTAGST1307, RHD4CZ8A011ST7200 |
| RHD4CZ8A011ST7400 |  | Steel Cover for Single Catch Basin - (RD-A-1 /1)-Z8-A011-ST | 6d | 2027-03-01 | 2027-03-07 | RHD4PRSHLDOSST1707, RHD4CZ8A011ST7300, RHD4CZ8A011PT4300 |
| RHD4CZ8A011ST7500 |  | Finishing and Insulation works for Single Catch Basin - (RD-A-1 /1)-Z8-A011-ST | 11d | 2027-03-08 | 2027-03-23 | RHD4CZ8A011ST7400 |
|  | 6409 | **RHD4-02-002-A011-(ST)-Double Catch Basin Works** |  | 2026-11-19 | 2026-11-30 |  |
| RHD4CZ8A011ST8100 |  | Excavation works for Double Catch Basin - (RD-A-1 /1)-Z8-A011-ST | 2d | 2026-11-19 | 2026-11-21 | RHD4CZ8A011RD1100, RHD4CZ8A011ST7100 |
| RHD4CZ8A011ST8200 |  | PC Blinding, Installation and Pipe connection for Double Catch Basin - (RD-A-1 /1)-Z8-A011-ST | 2d | 2026-11-22 | 2026-11-23 | RHD4CZ8A011ST8100 |
| RHD4CZ8A011ST8300 |  | Rings & C.Slab & Final Backfillfor Double Catch Basin - (RD-A-1 /1)-Z8-A011-ST | 2d | 2026-11-24 | 2026-11-25 | RHD4CZ8A011ST8200 |
| RHD4CZ8A011ST8400 |  | Steel Cover for Double Catch Basin - (RD-A-1 /1)-Z8-A011-ST | 2d | 2026-11-26 | 2026-11-28 | RHD4CZ8A011ST8300 |
| RHD4CZ8A011ST8500 |  | Finishing and Insulation works for Double Catch Basin - (RD-A-1 /1)-Z8-A011-ST | 2d | 2026-11-29 | 2026-11-30 | RHD4CZ8A011ST8400 |
|  | 7378 | **RHD4-02-002-Z8-A011-Sewage Network - SW** |  | 2027-01-05 | 2027-03-02 |  |
|  | 1895 | **RHD4-02-002-A011-(SW)-GRP Pipes - 500 mm diameter** |  | 2027-01-05 | 2027-01-16 |  |
| RHD4CZ8A011SW1102 |  | Excavation works for GRP Pipe Line 500 mm - (RD-A-1 /1)-Z8-A011-SW | 2d | 2027-01-05 | 2027-01-06 | RHD4CZ9L02SW3100, RHD4CZ8A011RD1100, RHD4CZ8A011ST2500 |
| RHD4CZ8A011SW1202 |  | Bedding works for GRP Pipe Line 500 mm - (RD-A-1 /1)-Z8-A011-SW | 2d | 2027-01-07 | 2027-01-09 | RHD4CZ8A011SW1102 |
| RHD4CZ8A011SW1302 |  | Installing for GRP Pipe Line 500 mm - (RD-A-1 /1)-Z8-A011-SW | 2d | 2027-01-10 | 2027-01-11 | RHD4CZ8A011SW1202 |
| RHD4CZ8A011SW1402 |  | Primary Test for GRP Pipe Line 500 mm - (RD-A-1 /1)-Z8-A011-SW | 2d | 2027-01-12 | 2027-01-13 | RHD4CZ8A011SW1302 |
| RHD4CZ8A011SW1502 |  | Backfilling and warning tape works for GRP Pipe Line 500 mm - (RD-A-1 /1)-Z8-A011-SW | 2d | 2027-01-14 | 2027-01-16 | RHD4CZ8A011SW1402 |
|  | 4542 | **RHD4-02-002-A011-(SW)-GRP Pipes - 400 mm diameter** |  | 2027-01-07 | 2027-02-04 |  |
| RHD4CZ8A011SW1101 |  | Excavation works for GRP Pipe Line 400 mm - (RD-A-1 /1)-Z8-A011-SW | 5d | 2027-01-07 | 2027-01-12 | RHD4CZ8A011RD1100, RHD4CZ8A011SW1102 |
| RHD4CZ8A011SW1201 |  | Bedding works for GRP Pipe Line 400 mm - (RD-A-1 /1)-Z8-A011-SW | 5d | 2027-01-13 | 2027-01-18 | RHD4CZ8A011SW1101 |
| RHD4CZ8A011SW1301 |  | Installing for GRP Pipe Line 400 mm - (RD-A-1 /1)-Z8-A011-SW | 5d | 2027-01-19 | 2027-01-24 | RHD4CZ8A011SW1201 |
| RHD4CZ8A011SW1401 |  | Primary Test for GRP Pipe Line 400 mm - (RD-A-1 /1)-Z8-A011-SW | 5d | 2027-01-25 | 2027-01-30 | RHD4CZ8A011SW1301 |
| RHD4CZ8A011SW1501 |  | Backfilling and warning tape works for GRP Pipe Line 400 mm - (RD-A-1 /1)-Z8-A011-SW | 5d | 2027-01-31 | 2027-02-04 | RHD4CZ8A011SW1401, RHD4CZ8A011SW1502 |
|  | 957 | **RHD4-02-002-A011-(SW)-MH Works - 1200 mm diameter with Back drop** |  | 2027-01-10 | 2027-01-24 |  |
| RHD4CZ8A011SW3101 |  | Excavation and PC Blinding works for MH 1200 mm - (RD-A-1 /1)-Z8-A011-SW | 2d | 2027-01-10 | 2027-01-11 | RHD4CZ8A011RD1100, RHD4CZ8A011SW3100 |
| RHD4CZ8A011SW3201 |  | Installation of Base for MH 1200 mm - (RD-A-1 /1)-Z8-A011-SW | 3d | 2027-01-12 | 2027-01-14 | RHD4CZ8A011SW3101 |

| ID | WBS | Task | Duration | Start | Finish | Predecessors |
| --- | --- | --- | --- | --- | --- | --- |
| RHD4CZ8A011SW3301 |  | MH Ring and C.Slab works and Backfilling works for MH 1200 mm - (RD-A-1 /1)-Z8-A011-SW | 3d | 2027-01-16 | 2027-01-18 | RHD4CZ8A011SW3201 |
| RHD4CZ8A011SW3401 |  | Steel Cover for MH 1200 mm - (RD-A-1 /1)-Z8-A011-SW | 2d | 2027-01-19 | 2027-01-20 | RHD4CZ8A011SW3301 |
| RHD4CZ8A011SW3501 |  | Finishing, Benching, Testing works for MH 1200 mm - (RD-A-1 /1)-Z8-A011-SW | 3d | 2027-01-21 | 2027-01-24 | RHD4CZ8A011SW3401, RHD4CZ8A011SW1502 |
|  | 3794 | **RHD4-02-002-A011-(SW)-MH Works - 1200 mm diameter** |  | 2027-01-07 | 2027-03-02 |  |
| RHD4CZ8A011SW3100 |  | Excavation and PC Blinding works for MH 1200 mm - (RD-A-1 /1)-Z8-A011-SW | 2d | 2027-01-07 | 2027-01-09 | RHD4CZ8A011RD1100, RHD4CZ8A011SW1102 |
| RHD4CZ8A011SW3200 |  | Installation of Base for MH 1200 mm - (RD-A-1 /1)-Z8-A011-SW | 13d | 2027-01-10 | 2027-01-24 | RHD4CZ8A011SW3100 |
| RHD4CZ8A011SW3300 |  | MH Ring and C.Slab works and Backfilling works for MH 1200 mm - (RD-A-1 /1)-Z8-A011-SW | 13d | 2027-01-25 | 2027-02-08 | RHD4CZ8A011SW3200 |
| RHD4CZ8A011SW3400 |  | Steel Cover for MH 1200 mm - (RD-A-1 /1)-Z8-A011-SW | 5d | 2027-02-09 | 2027-02-14 | RHD4CZ8A011SW3300 |
| RHD4CZ8A011SW3500 |  | Finishing, Benching, Testing works for MH 1200 mm - (RD-A-1 /1)-Z8-A011-SW | 13d | 2027-02-15 | 2027-03-02 | RHD4CZ8A011SW3400, RHD4CZ8A011SW1501, RHD4CZ8A011SW3501 |
|  | 3790 | **RHD4-02-002-A011-(SW)-UPVC Pipes - 200 mm diameter** |  | 2027-01-13 | 2027-02-02 |  |
| RHD4CZ8A011SW2100 |  | Excavation works for UPVC Pipe Line 200 mm - (RD-A-1 /1)-Z8-A011-SW | 4d | 2027-01-13 | 2027-01-17 | RHD4CZ8A011RD1100, RHD4CZ8A011SW1101 |
| RHD4CZ8A011SW2200 |  | Bedding works for UPVC Pipe Line 200 mm - (RD-A-1 /1)-Z8-A011-SW | 3d | 2027-01-18 | 2027-01-20 | RHD4CZ8A011SW2100 |
| RHD4CZ8A011SW2300 |  | Installing for UPVC Pipe Line 200 mm - (RD-A-1 /1)-Z8-A011-SW | 4d | 2027-01-21 | 2027-01-25 | RHD4CZ8A011SW2200 |
| RHD4CZ8A011SW2400 |  | Primary Test for UPVC Pipe Line 200 mm - (RD-A-1 /1)-Z8-A011-SW | 3d | 2027-01-26 | 2027-01-28 | RHD4CZ8A011SW2300 |
| RHD4CZ8A011SW2500 |  | Backfilling and warning tape works for UPVC Pipe Line 200 mm - (RD-A-1 /1)-Z8-A011-SW | 4d | 2027-01-30 | 2027-02-02 | RHD4CZ8A011SW2400 |
|  | 7793 | **RHD4-02-002-Z8-A011-Potable Network - PT** |  | 2027-01-18 | 2027-03-07 |  |
|  | 7797 | **RHD4-02-002-A011-(PT)-HDPE Pipes - 400 mm diameter** |  | 2027-01-18 | 2027-02-15 |  |
| RHD4CZ8A011PT1103 |  | Excavation works for HDPE Pipline 400 mm - (RD-A-1 /1)-Z8-A011-PT | 7d | 2027-01-18 | 2027-01-25 | RHD4ENSDZ8APPPT130, RHD4ENMSPT2000, RHD4CZ8A011SW2100 |
| RHD4CZ8A011PT1203 |  | Bedding works for HDPE Pipline 400 mm - (RD-A-1 /1)-Z8-A011-PT | 7d | 2027-01-26 | 2027-02-02 | RHD4CZ8A011PT1103 |
| RHD4CZ8A011PT1303 |  | Installing for HDPE Pipline 400 mm - (RD-A-1 /1)-Z8-A011-PT | 5d | 2027-02-03 | 2027-02-08 | RHD4PRSHLDOSPT1000, RHD4PRSHLSTAGPT1000, RHD4CZ8A011PT1203 |
| RHD4CZ8A011PT1403 |  | Primary Test for HDPE Pipline 400 mm - (RD-A-1 /1)-Z8-A011-PT | 3d | 2027-02-09 | 2027-02-11 | RHD4CZ8A011PT1303 |
| RHD4CZ8A011PT1503 |  | Backfilling and warning tape works for HDPE Pipline 400 mm - (RD-A-1 /1)-Z8-A011-PT | 3d | 2027-02-13 | 2027-02-15 | RHD4CZ8A011PT1403 |
|  | 6102 | **RHD4-02-002-A011-(PT)-Air Valve Chambers** |  | 2027-02-18 | 2027-02-28 |  |
| RHD4CZ8A011PT2102 |  | Excavation and Bedding for Air Valve Chambers for Potable Water Network - (RD-A-1 /1)-Z8-A011-PT | 2d | 2027-02-18 | 2027-02-20 | RHD4CZ8A011PT2101 |
| RHD4CZ8A011PT2202 |  | PC works for Air Valve Chambers for Potable Water Network - (RD-A-1 /1)-Z8-A011-PT | 2d | 2027-02-21 | 2027-02-23 | RHD4CZ8A011PT2102 |
| RHD4CZ8A011PT2302 |  | Installation for Air Valve Chambers for Potable Water Network - (RD-A-1 /1)-Z8-A011-PT | 2d | 2027-02-24 | 2027-02-25 | RHD4CZ8A011PT2202 |
| RHD4CZ8A011PT2402 |  | Backfilling works for Air Valve Chambers for Potable Water Network - (RD-A-1 /1)-Z8-A011-PT | 2d | 2027-02-27 | 2027-02-28 | RHD4CZ8A011PT2302 |
|  | 6103 | **RHD4-02-002-A011-(PT)-Air Valves** |  | 2027-02-27 | 2027-03-04 |  |
| RHD4CZ8A011PT3103 |  | Installation for Air Valves for Potable Water Network - (RD-A-1 /1)-Z8-A011-PT | 2d | 2027-02-27 | 2027-02-28 | RHD4CZ8A011PT2302, RHD4CZ8A011PT2101 |
| RHD4CZ8A011PT3203 |  | Stem and Service box for Air Valves for Potable Water Network - (RD-A-1 /1)-Z8-A011-PT | 2d | 2027-03-03 | 2027-03-04 | RHD4CZ8A011PT3103, RHD4CZ8A011PT2402, RHD4CZ8A011SW3500 |
|  | 7801 | **RHD4-02-002-A011-(PT)-Butterfly Valves** |  | 2027-02-21 | 2027-02-28 |  |
| RHD4CZ8A011PT3101 |  | Installation for Butterfly Valves for Potable Water Network - (RD-A-1 /1)-Z8-A011-PT | 2d | 2027-02-21 | 2027-02-23 | RHD4PRSHLDOSPT1200, RHD4PRSHLSTAGPT1200, RHD4CZ8A011PT2300 SS |
| RHD4CZ8A011PT3201 |  | Stem and Service box for Butterfly Valves for Potable Water Network - (RD-A-1 /1)-Z8-A011-PT | 2d | 2027-02-27 | 2027-02-28 | RHD4PRSHLDOSPT1300, RHD4PRSHLSTAGPT1300, RHD4CZ8A011PT3101, RHD4CZ8A011PT2400 |
|  | 7802 | **RHD4-02-002-A011-(PT)-Wash out Valve Chambers** |  | 2027-02-16 | 2027-03-07 |  |
| RHD4CZ8A011PT2101 |  | Excavation and Bedding for Wash out Valve Chambers for Potable Water Network - (RD-A-1 /1)-Z8-A011-PT | 2d | 2027-02-16 | 2027-02-17 | RHD4ENSDZ8APPPT130, RHD4CZ8A011PT1503 |
| RHD4CZ8A011PT2201 |  | PC works for Wash out Valve Chambers for Potable Water Network - (RD-A-1 /1)-Z8-A011-PT | 2d | 2027-03-01 | 2027-03-02 | RHD4CZ8A011PT2101, RHD4CZ8A011PT3201 |
| RHD4CZ8A011PT2301 |  | Installation for Wash out Valve Chambers for Potable Water Network - (RD-A-1 /1)-Z8-A011-PT | 2d | 2027-03-03 | 2027-03-04 | RHD4PRSHLDOSPT1100, RHD4PRSHLDOSPT1400, RHD4PRSHLSTAGPT1100, RHD4PRSHLSTAGPT1400, RHD4CZ8A011PT2201 |
| RHD4CZ8A011PT2401 |  | Backfilling works for Wash out Valve Chambers for Potable Water Network - (RD-A-1 /1)-Z8-A011-PT | 2d | 2027-03-06 | 2027-03-07 | RHD4CZ8A011PT2301, RHD4CZ8A011PT3203, RHD4CZ8A011IRR3200 |
|  | 7803 | **RHD4-02-002-A011-(PT)-Wash out Valves** |  | 2027-02-24 | 2027-02-28 |  |
| RHD4CZ8A011PT3102 |  | Installation for Wash out Valves for Potable Water Network - (RD-A-1 /1)-Z8-A011-PT | 2d | 2027-02-24 | 2027-02-25 | RHD4PRSHLDOSPT1200, RHD4PRSHLSTAGPT1200, RHD4CZ8A011PT3101 |
| RHD4CZ8A011PT3202 |  | Stem and Service box for Wash out Valves for Potable Water Network - (RD-A-1 /1)-Z8-A011-PT | 2d | 2027-02-27 | 2027-02-28 | RHD4PRSHLDOSPT1300, RHD4PRSHLSTAGPT1300, RHD4CZ8A011PT3102 |
|  | 7806 | **RHD4-02-002-A011-(PT)-Fire Hydrant** |  | 2027-02-16 | 2027-03-06 |  |
| RHD4CZ8A011PT4100 |  | Excavation and Bedding and Pipe Installation for Fire Hydrant - (RD-A-1 /1)-Z8-A011-PT | 4d | 2027-02-16 | 2027-02-20 | RHD4ENSDZ8APPPT130, RHD4CZ8A011PT1503 |
| RHD4CZ8A011PT4200 |  | Valve Installation for Fire Hydrant - (RD-A-1 /1)-Z8-A011-PT | 3d | 2027-02-21 | 2027-02-24 | RHD4CZ8A011PT4100 |
| RHD4CZ8A011PT4300 |  | Stem for Fire Hydrant - (RD-A-1 /1)-Z8-A011-PT | 3d | 2027-02-25 | 2027-02-28 | RHD4CZ8A011PT4200 |
| RHD4CZ8A011PT4400 |  | Fire Installation for Fire Hydrant - (RD-A-1 /1)-Z8-A011-PT | 3d | 2027-03-01 | 2027-03-03 | RHD4PRSHLDOSPT1500, RHD4PRSHLSTAGPT1500, RHD4CZ8A011PT4300 |
| RHD4CZ8A011PT4500 |  | Protection Barriers for Fire Hydrant - (RD-A-1 /1)-Z8-A011-PT | 2d | 2027-03-04 | 2027-03-06 | RHD4CZ8A011PT4400 |
|  | 7800 | **RHD4-02-002-A011-(PT)-Butterfly Valve Chamber** |  | 2027-02-16 | 2027-02-25 |  |
| RHD4CZ8A011PT2100 |  | Excavation and Bedding for Butterfly Valve Chamber for Potable Water Network - (RD-A-1 /1)-Z8-A011-PT | 2d | 2027-02-16 | 2027-02-17 | RHD4ENSDZ8APPPT130, RHD4CZ8A011PT1503 |
| RHD4CZ8A011PT2200 |  | PC works for Butterfly Valve Chamber for Potable Water Network - (RD-A-1 /1)-Z8-A011-PT | 2d | 2027-02-18 | 2027-02-20 | RHD4CZ8A011PT2100 |
| RHD4CZ8A011PT2300 |  | Installation for Butterfly Valve Chamber for Potable Water Network - (RD-A-1 /1)-Z8-A011-PT | 2d | 2027-02-21 | 2027-02-23 | RHD4PRSHLDOSPT1100, RHD4PRSHLDOSPT1400, RHD4PRSHLSTAGPT1100, RHD4PRSHLSTAGPT1400, RHD4CZ8A011PT2200 |
| RHD4CZ8A011PT2400 |  | Backfilling works for Butterfly Valve Chamber for Potable Water Network - (RD-A-1 /1)-Z8-A011-PT | 2d | 2027-02-24 | 2027-02-25 | RHD4CZ8A011PT2300 |
|  | 1755 | **RHD4-02-002-Z8-A011-Irrigation Network - IRR** |  | 2027-01-26 | 2027-03-08 |  |
|  | 6107 | **RHD4-02-002-A011-(IRR)-HDPE Pipes - 160 mm diameter** |  | 2027-01-26 | 2027-02-06 |  |
| RHD4CZ8A011IRR1100 |  | Excavation works for HDPE Pipline 160 mm - (RD-A-1 /1)-Z8-A011-IRR | 2d | 2027-01-26 | 2027-01-27 | RHD4CZ8A011RD1100, RHD4CZ8A011PT1103 |
| RHD4CZ8A011IRR1200 |  | Bedding works for HDPE Pipline 160 mm - (RD-A-1 /1)-Z8-A011-IRR | 2d | 2027-01-28 | 2027-01-30 | RHD4CZ8A011IRR1100 |
| RHD4CZ8A011IRR1300 |  | Installing for HDPE Pipline 160 mm - (RD-A-1 /1)-Z8-A011-IRR | 2d | 2027-01-31 | 2027-02-01 | RHD4CZ8A011IRR1200 |
| RHD4CZ8A011IRR1400 |  | Primary Test for HDPE Pipline 160 mm - (RD-A-1 /1)-Z8-A011-IRR | 2d | 2027-02-02 | 2027-02-03 | RHD4CZ8A011IRR1300 |
| RHD4CZ8A011IRR1500 |  | Backfilling and warning tape works for HDPE Pipline 160 mm - (RD-A-1 /1)-Z8-A011-IRR | 2d | 2027-02-04 | 2027-02-06 | RHD4CZ8A011IRR1400 |
|  | 6115 | **RHD4-02-002-A011-(IRR)-Gate Valves (Direct Buried)** |  | 2027-02-14 | 2027-02-20 |  |
| RHD4CZ8A011IRR3100 |  | Installation for Direct Buried Gate Valves - (RD-A-1 /1)-Z8-A011-IRR | 3d | 2027-02-14 | 2027-02-16 | RHD4CZ8A011IRR1300 SS, RHD4CZ8A011IRR1300 FF, RHD4CZ8A011IRR1303 |
| RHD4CZ8A011IRR3200 |  | Stem and Service box for Direct Buried Gate Valves - (RD-A-1 /1)-Z8-A011-IRR | 3d | 2027-02-17 | 2027-02-20 | RHD4CZ8A011IRR3100, RHD4CZ8A011IRR1500 |
|  | 6116 | **RHD4-02-002-A011-(IRR)-Butterfly Valve Chamber** |  | 2027-01-28 | 2027-02-06 |  |
| RHD4CZ8A011IRR2100 |  | Excavation and Bedding for Butterfly Valve Chamber for Irrigation Network - (RD-A-1 /1)-Z8-A011-IRR | 2d | 2027-01-28 | 2027-01-30 | RHD4CZ8A011IRR1100 |
| RHD4CZ8A011IRR2200 |  | PC works for Butterfly Valve Chamber for Irrigation Network - (RD-A-1 /1)-Z8-A011-IRR | 2d | 2027-01-31 | 2027-02-01 | RHD4CZ8A011IRR2100 |
| RHD4CZ8A011IRR2300 |  | Installation for Butterfly Valve Chamber for Irrigation Network - (RD-A-1 /1)-Z8-A011-IRR | 2d | 2027-02-02 | 2027-02-03 | RHD4CZ8A011IRR2200 |
| RHD4CZ8A011IRR2400 |  | Backfilling works for Butterfly Valve Chamber for Irrigation Network - (RD-A-1 /1)-Z8-A011-IRR | 2d | 2027-02-04 | 2027-02-06 | RHD4CZ8A011IRR2300 |
|  | 6117 | **RHD4-02-002-A011-(IRR)-Butterfly Valves** |  | 2027-02-14 | 2027-02-17 |  |
| RHD4CZ8A011IRR3101 |  | Installation for Butterfly Valves for Irrigation Network - (RD-A-1 /1)-Z8-A011-IRR | 2d | 2027-02-14 | 2027-02-15 | RHD4CZ8A011IRR1300, RHD4CZ8A011IRR1303 |
| RHD4CZ8A011IRR3201 |  | Stem and Service box for Butterfly Valves for Irrigation Network - (RD-A-1 /1)-Z8-A011-IRR | 2d | 2027-02-16 | 2027-02-17 | RHD4CZ8A011IRR3101, RHD4CZ8A011IRR2400 |

| ID | WBS | Task | Duration | Start | Finish | Predecessors |
| --- | --- | --- | --- | --- | --- | --- |
|  | 1769 | **RHD4-02-002-A011-(IRR)-Air Valve Chamber** |  | 2027-01-28 | 2027-02-06 |  |
| RHD4CZ8A011IRR2102 |  | Excavation and Bedding for Valve Chamber for Irrigation Network - (RD-A-1 /1)-Z8-A011-IRR | 2d | 2027-01-28 | 2027-01-30 | RHD4CZ8A011IRR1100 |
| RHD4CZ8A011IRR2202 |  | PC works for Valve Chamber for Irrigation Network - (RD-A-1 /1)-Z8-A011-IRR | 2d | 2027-01-31 | 2027-02-01 | RHD4CZ8A011IRR2102 |
| RHD4CZ8A011IRR2302 |  | Installation for Valve Chamber for Irrigation Network - (RD-A-1 /1)-Z8-A011-IRR | 2d | 2027-02-02 | 2027-02-03 | RHD4CZ8A011IRR2202 |
| RHD4CZ8A011IRR2402 |  | Backfilling works for Valve Chamber for Irrigation Network - (RD-A-1 /1)-Z8-A011-IRR | 2d | 2027-02-04 | 2027-02-06 | RHD4CZ8A011IRR2302 |
|  | 1770 | **RHD4-02-002-A011-(IRR)-Air Valves** |  | 2027-02-04 | 2027-02-08 |  |
| RHD4CZ8A011IRR3103 |  | Installation for Air Valves for Irrigation Network - (RD-A-1 /1)-Z8-A011-IRR | 2d | 2027-02-04 | 2027-02-06 | RHD4CZ8A011IRR2302 |
| RHD4CZ8A011IRR3203 |  | Stem and Service box for Air Valves for Irrigation Network - (RD-A-1 /1)-Z8-A011-IRR | 2d | 2027-02-07 | 2027-02-08 | RHD4CZ8A011IRR3103, RHD4CZ8A011IRR2402 |
|  | 8762 | **RHD4-02-002-A011-(IRR)-HDPE Pipes - 500 mm diameter** |  | 2027-01-28 | 2027-03-08 |  |
| RHD4CZ8A011IRR1107 |  | Excavation works for HDPE Pipline 500 mm - (RD-A-1 /1)-Z8-A011-IRR | 8d | 2027-01-28 | 2027-02-06 | RHD4CZ8A011RD1100, RHD4CZ8A011IRR1100 |
| RHD4CZ8A011IRR1207 |  | Bedding works for HDPE Pipline 500 mm - (RD-A-1 /1)-Z8-A011-IRR | 7d | 2027-02-07 | 2027-02-14 | RHD4CZ8A011IRR1107 |
| RHD4CZ8A011IRR1307 |  | Installing for HDPE Pipline 500 mm - (RD-A-1 /1)-Z8-A011-IRR | 8d | 2027-02-15 | 2027-02-24 | RHD4CZ8A011IRR1207 |
| RHD4CZ8A011IRR1407 |  | Primary Test for HDPE Pipline 500 mm - (RD-A-1 /1)-Z8-A011-IRR | 3d | 2027-02-25 | 2027-02-28 | RHD4CZ8A011IRR1307 |
| RHD4CZ8A011IRR1507 |  | Backfilling and warning tape works for HDPE Pipline 500 mm - (RD-A-1 /1)-Z8-A011-IRR | 7d | 2027-03-01 | 2027-03-08 | RHD4CZ8A011IRR1407 |
|  | 3651 | **RHD4-02-002-A011-(IRR)-HDPE Pipes - 250 mm diameter** |  | 2027-02-07 | 2027-02-17 |  |
| RHD4CZ8A011IRR1103 |  | Excavation works for HDPE Pipline 250 mm - (RD-A-1 /1)-Z8-A011-IRR | 2d | 2027-02-07 | 2027-02-08 | RHD4CZ8A011RD1100, RHD4CZ8A011IRR1107 |
| RHD4CZ8A011IRR1203 |  | Bedding works for HDPE Pipline 250 mm - (RD-A-1 /1)-Z8-A011-IRR | 2d | 2027-02-09 | 2027-02-10 | RHD4CZ8A011IRR1103 |
| RHD4CZ8A011IRR1303 |  | Installing for HDPE Pipline 250 mm - (RD-A-1 /1)-Z8-A011-IRR | 2d | 2027-02-11 | 2027-02-13 | RHD4CZ8A011IRR1203 |
| RHD4CZ8A011IRR1403 |  | Primary Test for HDPE Pipline 250 mm - (RD-A-1 /1)-Z8-A011-IRR | 2d | 2027-02-14 | 2027-02-15 | RHD4CZ8A011IRR1303 |
| RHD4CZ8A011IRR1503 |  | Backfilling and warning tape works for HDPE Pipline 250 mm - (RD-A-1 /1)-Z8-A011-IRR | 2d | 2027-02-16 | 2027-02-17 | RHD4CZ8A011IRR1403 |
|  | 7842 | **RHD4-02-002-Z8-A011-Medium Voltage Network - MV** |  | 2026-09-13 | 2027-03-03 |  |
|  | 7843 | **RHD4-02-002-A011-(MV)-Medium Voltage cable trench** |  | 2027-01-26 | 2027-02-23 |  |
| RHD4CZ8A011MV1100 |  | Excavation for Medium Voltage Trench - (RD-A-1 /1)-Z8-A011-MV | 7d | 2027-01-26 | 2027-02-02 | RHD4ENSDZ8APPMV150, RHD4CZ8A011ST1109, RHD4CZ8A011RD3100, RHD4CZ4C012MV1200 |
| RHD4CZ8A011MV1200 |  | Trench Backfilling for Medium Voltage Network - (RD-A-1 /1)-Z8-A011-MV | 7d | 2027-02-15 | 2027-02-23 | RHD4CZ8A011MV3200, RHD4CZ8A011MV3101 |
|  | 7844 | **RHD4-02-002-A011-(MV)-Medium Voltage duct banks** |  | 2026-09-13 | 2026-11-11 |  |
| RHD4CZ8A011MV2100 |  | Excavation of Duct Banks for Medium Voltage Network - (RD-A-1 /1)-Z8-A011-MV | 12d | 2026-09-13 | 2026-09-27 | RHD4ENSDZ8APPMV150, RHD4CZ8A011RD1100, RHD4CZ8A011RD3100 |
| RHD4CZ8A011MV2200 |  | Installation of Duct Banks for Medium Voltage Network - (RD-A-1 /1)-Z8-A011-MV | 18d | 2026-09-28 | 2026-10-18 | RHD4PRSHLDOSMV1000, RHD4PRSHLSTAGMV1000, RHD4CZ8A011MV2100 |
| RHD4CZ8A011MV2300 |  | Pouring of Duct Banks for Medium Voltage Network - (RD-A-1 /1)-Z8-A011-MV | 12d | 2026-10-19 | 2026-11-01 | RHD4CZ8A011MV2200 |
| RHD4CZ8A011MV2400 |  | Backfilling of Duct Banks for Medium Voltage Network - (RD-A-1 /1)-Z8-A011-MV | 9d | 2026-11-02 | 2026-11-11 | RHD4CZ8A011MV2300 |
|  | 7845 | **RHD4-02-002-A011-(MV)-Medium Voltage cables 3Cx 500 mm²** |  | 2027-02-03 | 2027-03-03 |  |
| RHD4CZ8A011MV3100 |  | Installation of Medium Voltage Cables 3Cx 500 mm² - (RD-A-1 /1)-Z8-A011-MV | 5d | 2027-02-03 | 2027-02-08 | RHD4PRSHLDOSMV1100, RHD4ENMSMV2000, RHD4ENMSMV2010, RHD4PRSHLSTAGMV1100, RHD4CZ8A011MV1100 |
| RHD4CZ8A011MV3200 |  | Joints Installation of Medium Voltage Cables 3Cx 500 mm² - (RD-A-1 /1)-Z8-A011-MV | 5d | 2027-02-09 | 2027-02-14 | RHD4PRSHLDOSMV1300, RHD4PRSHLSTAGMV1300, RHD4CZ8A011MV3100 |
| RHD4CZ8A011MV3300 |  | Testing of Medium Voltage Cables 3Cx 500 mm² - (RD-A-1 /1)-Z8-A011-MV | 5d | 2027-02-24 | 2027-03-01 | RHD4CZ8A011MV3200, RHD4CZ8A011MV1200 |
| RHD4CZ8A011MV3400 |  | Termination of Medium Voltage Cables 3Cx 500 mm² - (RD-A-1 /1)-Z8-A011-MV | 2d | 2027-03-02 | 2027-03-03 | RHD4CZ8A011MV3300, RHD4CZ8A011MV5400 |
|  | 7846 | **RHD4-02-002-A011-(MV)-Medium Voltage cables 3Cx 50 mm²** |  | 2027-02-03 | 2027-02-28 |  |
| RHD4CZ8A011MV3101 |  | Installation of Medium Voltage Cables 3Cx 50 mm² - (RD-A-1 /1)-Z8-A011-MV | 2d | 2027-02-03 | 2027-02-04 | RHD4PRSHLDOSMV1200, RHD4ENMSMV2000, RHD4ENMSMV2010, RHD4PRSHLSTAGMV1200, RHD4CZ8A011MV1100 |
| RHD4CZ8A011MV3301 |  | Testing of Medium Voltage Cables 3Cx 50 mm² - (RD-A-1 /1)-Z8-A011-MV | 2d | 2027-02-24 | 2027-02-25 | RHD4CZ8A011MV3101, RHD4CZ8A011MV1200 |
| RHD4CZ8A011MV3401 |  | Termination of Medium Voltage Cables 3Cx 50 mm² - (RD-A-1 /1)-Z8-A011-MV | 2d | 2027-02-27 | 2027-02-28 | RHD4CZ8A011MV3301, RHD4CZ8A011MV5400 |
|  | 7848 | **RHD4-02-002-A011-(MV)-Unit Substations** |  | 2027-02-15 | 2027-02-24 |  |
| RHD4CZ8A011MV5100 |  | Excavation for Unit Substations for Medium Voltage Network - (RD-A-1 /1)-Z8-A011-MV | 2d | 2027-02-15 | 2027-02-16 | RHD4ENSDZ8APPMV150, RHD4CZ8A011MV1200 SS |
| RHD4CZ8A011MV5200 |  | Concrete Base Placement for Unit Substations for Medium Voltage Network - (RD-A-1 /1)-Z8-A011-MV | 2d | 2027-02-17 | 2027-02-18 | RHD4CZ8A011MV5100 |
| RHD4CZ8A011MV5300 |  | Installation for Fences and doors for Medium Voltage Network - (RD-A-1 /1)-Z8-A011-MV | 2d | 2027-02-20 | 2027-02-21 | RHD4CZ8A011MV5200 |
| RHD4CZ8A011MV5400 |  | Installation for Unit Substations for Medium Voltage Network - (RD-A-1 /1)-Z8-A011-MV | 2d | 2027-02-23 | 2027-02-24 | RHD4PRLOLSTAGMV1601, RHD4PRLOLSTAGMV1602, RHD4CZ8A011MV5300 |
|  | 7849 | **RHD4-02-002-Z8-A011-Low Voltage Network - LV** |  | 2027-03-13 | 2027-04-21 |  |
|  | 7850 | **RHD4-02-002-A011-(LV)-Low Voltage duct banks** |  | 2027-03-13 | 2027-04-04 |  |
| RHD4CZ8A011LV2100 |  | Excavation of Duct Banks for Low Voltage Network - (RD-A-1 /1)-Z8-A011-LV | 5d | 2027-03-13 | 2027-03-17 | RHD4ENSDZ8APPLV160, RHD4CZ8A011IRR1507, RHD4CZ8A011RW3000, RHD4CZ8A011RD1100, RHD4CZ8A011MV2100 |
| RHD4CZ8A011LV2200 |  | Installation of Duct Banks for Low Voltage Network - (RD-A-1 /1)-Z8-A011-LV | 5d | 2027-03-18 | 2027-03-23 | RHD4PRSHLDOSLV1000, RHD4PRSHLSTAGLV1000, RHD4CZ8A011LV2100 |
| RHD4CZ8A011LV2300 |  | Pouring of Duct Banks for Low Voltage Network - (RD-A-1 /1)-Z8-A011-LV | 5d | 2027-03-24 | 2027-03-29 | RHD4CZ8A011LV2200 |
| RHD4CZ8A011LV2400 |  | Backfilling of Duct Banks for Low Voltage Network - (RD-A-1 /1)-Z8-A011-LV | 5d | 2027-03-30 | 2027-04-04 | RHD4CZ8A011LV2300 |
|  | 7851 | **RHD4-02-002-A011-(LV)-Low Voltage Drawpit** |  | 2027-03-13 | 2027-03-16 |  |
| RHD4CZ8A011LV5100 |  | Excavation of Drawpit size 900x900x1000mm for Low Voltage Network - (RD-A-1 /1)-Z8-A011-LV | 2d | 2027-03-13 | 2027-03-14 | RHD4ENSDZ8APPLV160, RHD4CZ8A011IRR1507, RHD4CZ8A011MV3400, RHD4CZ8A011MV3401 |
| RHD4CZ8A011LV5200 |  | Installation of Drawpit size 900x900x1000mm for Low Voltage Network - (RD-A-1 /1)-Z8-A011-LV | 2d | 2027-03-15 | 2027-03-16 | RHD4PRSHLDOSLV1400, RHD4PRSHLSTAGLV1400, RHD4CZ8A011LV5100 |
|  | 7852 | **RHD4-02-002-A011-(LV)-Low Voltage cables** |  | 2027-04-05 | 2027-04-14 |  |
| RHD4CZ8A011LV3100 |  | Excavation for Low Voltage Cables for Low Voltage Network - (RD-A-1 /1)-Z8-A011-LV | 3d | 2027-04-05 | 2027-04-07 | RHD4ENSDZ8APPLV160, RHD4CZ8A011LV2400, RHD4CZ8A011LV5200 |
| RHD4CZ8A011LV3200 |  | Cable Laying of Low Voltage Cables for Low Voltage Network - (RD-A-1 /1)-Z8-A011-LV | 2d | 2027-04-08 | 2027-04-10 | RHD4PRSHLDOSLV1100, RHD4ENMSLV2000, RHD4ENMSLV2010, RHD4PRSHLSTAGLV1100, RHD4CZ8A011LV3100 |
| RHD4CZ8A011LV3300 |  | Warning tape and Backfill for Low Voltage Cables for Low Voltage Network - (RD-A-1 /1)-Z8-A011-LV | 2d | 2027-04-11 | 2027-04-12 | RHD4CZ8A011LV3200 |
| RHD4CZ8A011LV3400 |  | Testing of Low Voltage Cables for Low Voltage Network - (RD-A-1 /1)-Z8-A011-LV | 2d | 2027-04-13 | 2027-04-14 | RHD4CZ8A011LV3300 |
|  | 7853 | **RHD4-02-002-A011-(LV)-Low Voltage Distribution Pillars** |  | 2027-04-15 | 2027-04-21 |  |
| RHD4CZ8A011LV4100 |  | Leveling for Distribution Pillars for Low Voltage Network - (RD-A-1 /1)-Z8-A011-LV | 2d | 2027-04-15 | 2027-04-17 | RHD4CZ8A011LV3300, RHD4CZ8A011LV3400 |
| RHD4CZ8A011LV4200 |  | Lean Concrete for Distribution Pillars for Low Voltage Network - (RD-A-1 /1)-Z8-A011-LV | 2d | 2027-04-18 | 2027-04-19 | RHD4CZ8A011LV4100 |
| RHD4CZ8A011LV4300 |  | Installation of Distribution Pillars for Low Voltage Network - (RD-A-1 /1)-Z8-A011-LV | 2d | 2027-04-20 | 2027-04-21 | RHD4PRSHLDOSLV1200, RHD4PRSHLDOSLV1300, RHD4PRSHLSTAGLV1200, RHD4PRSHLSTAGLV1300, RHD4CZ8A011LV4200 |
|  | 7854 | **RHD4-02-002-A011-(LV)-Low Voltage Distribution Pillars Earthing** |  |  |  |  |
|  | 7855 | **RHD4-02-002-Z8-A011-Street Lighting Network - SL** |  | 2027-04-22 | 2027-06-20 |  |
|  | 7856 | **RHD4-02-002-A011-(SL)-Street Lighting duct banks** |  |  |  |  |
|  | 7857 | **RHD4-02-002-A011-(SL)-Street Lighting Drawpit** |  | 2027-04-22 | 2027-04-26 |  |
| RHD4CZ8A011SL5100 |  | Excavation of Drawpit size 600x600x900mm for Street Lighting Network - (RD-A-1 /1)-Z8-A011-SL | 2d | 2027-04-22 | 2027-04-24 | RHD4ENSDZ8APPSL170, RHD4CZ8A011LV4300 |
| RHD4CZ8A011SL5200 |  | Installation of Drawpit size 600x600x900mm for Street Lighting Network - (RD-A-1 /1)-Z8-A011-SL | 2d | 2027-04-25 | 2027-04-26 | RHD4PRSHLDOSSL1400, RHD4PRSHLSTAGSL1400, RHD4CZ8A011SL5100 |
|  | 7858 | **RHD4-02-002-A011-(SL)-Street Lighting cables** |  | 2027-04-27 | 2027-05-20 |  |
| RHD4CZ8A011SL3100 |  | Excavation for Street Lighting Cables for Street Lighting Network - (RD-A-1 /1)-Z8-A011-SL | 5d | 2027-04-27 | 2027-05-02 | RHD4ENSDZ8APPSL170, RHD4CZ8A011SL5200 |
| RHD4CZ8A011SL3200 |  | Cable Laying of Street Lighting Cables for Street Lighting Network - (RD-A-1 /1)-Z8-A011-SL | 5d | 2027-05-03 | 2027-05-08 | RHD4PRSHLDOSSL1100, RHD4ENMSSL2000, RHD4ENMSSL2010, RHD4PRSHLSTAGSL1100, RHD4CZ8A011SL3100 |

| ID | WBS | Task | Duration | Start | Finish | Predecessors |
| --- | --- | --- | --- | --- | --- | --- |
| RHD4CZ8A011SL3300 |  | Warning tape and Backfill for Street Lighting Cables for Street Lighting Network - (RD-A-1 /1)-Z8-A011-SL | 4d | 2027-05-09 | 2027-05-12 | RHD4CZ8A011SL3200 |
| RHD4CZ8A011SL3400 |  | Testing of Street Lighting Cables for Street Lighting Network - (RD-A-1 /1)-Z8-A011-SL | 3d | 2027-05-13 | 2027-05-20 | RHD4CZ8A011SL3300, RHD4CZ8A011LV3400 |
|  | 7859 | **RHD4-02-002-A011-(SL)-Street Lighting Poles** |  | 2027-05-22 | 2027-06-10 |  |
| RHD4CZ8A011SL1100 |  | Excavation for RC Base for Lighting Poles for Street Lighting Network - (RD-A-1 /1)-Z8-A011-SL | 3d | 2027-05-22 | 2027-05-24 | RHD4ENSDZ8APPSL170, RHD4CZ8A011SL3400 |
| RHD4CZ8A011SL1200 |  | Installation for RC Base for Lighting Poles for Street Lighting Network - (RD-A-1 /1)-Z8-A011-SL | 3d | 2027-05-25 | 2027-05-27 | RHD4CZ8A011SL1100 |
| RHD4CZ8A011SL1300 |  | Backfill for RC Base for Lighting Poles for Street Lighting Network - (RD-A-1 /1)-Z8-A011-SL | 3d | 2027-05-29 | 2027-05-31 | RHD4CZ8A011SL1200 |
| RHD4CZ8A011SL1400 |  | Installation for Lighting Poles for Street Lighting Network - (RD-A-1 /1)-Z8-A011-SL | 4d | 2027-06-01 | 2027-06-05 | RHD4PRSHLDOSSL1200, RHD4ENMSSL2000, RHD4ENMSSL2010, RHD4PRSHLSTAGSL1200, RHD4CZ8A011SL1300 |
| RHD4CZ8A011SL1500 |  | Luminaire Installation for Lighting Poles for Street Lighting Network - (RD-A-1 /1)-Z8-A011-SL | 5d | 2027-06-06 | 2027-06-10 | RHD4PRSHLDOSSL1300, RHD4PRSHLSTAGSL1300, RHD4CZ8A011SL1400 |
|  | 7860 | **RHD4-02-002-A011-(SL)-Street Lighting Feeder Pillars** |  | 2027-06-12 | 2027-06-17 |  |
| RHD4CZ8A011SL4100 |  | Leveling for Distribution Pillars for Street Lighting Network - (RD-A-1 /1)-Z8-A011-SL | 2d | 2027-06-12 | 2027-06-13 | RHD4CZ8A011SL1500 |
| RHD4CZ8A011SL4200 |  | Lean Concrete for Distribution Pillars for Street Lighting Network - (RD-A-1 /1)-Z8-A011-SL | 2d | 2027-06-14 | 2027-06-15 | RHD4CZ8A011SL4100 |
| RHD4CZ8A011SL4300 |  | Installation of Distribution Pillars for Street Lighting Network - (RD-A-1 /1)-Z8-A011-SL | 2d | 2027-06-16 | 2027-06-17 | RHD4CZ8A011SL4200 |
|  | 7861 | **RHD4-02-002-A011-(SL)-Street Lighting Earthing System** |  | 2027-06-19 | 2027-06-20 |  |
| RHD4CZ8A011SL6100 |  | Installation of Earthing for Lighting Poles and Fedder Pillers for Street Lighting Network - (RD-A-1 /1)-Z8-A011-SL | 2d | 2027-06-19 | 2027-06-20 | RHD4ENMSER2000, RHD4ENMSER2010, RHD4CZ8A011SL4300 |
|  | 7867 | **RHD4-02-002-Z8-A011-Telecommunications Network - TC** |  | 2026-08-18 | 2027-07-28 |  |
|  | 7868 | **RHD4-02-002-A011-(TC)-Telecommunications Ducts** |  | 2027-06-21 | 2027-07-21 |  |
| RHD4CZ8A011TC2100 |  | Excavation of HDPE Ducts for Telecom Network - (RD-A-1 /1)-Z8-A011-TC | 8d | 2027-06-21 | 2027-06-29 | RHD4ENSDZ8APPTC190, RHD4CZ8A011SL6100 |
| RHD4CZ8A011TC2200 |  | Installation of HDPE Ducts for Telecom Network - (RD-A-1 /1)-Z8-A011-TC | 11d | 2027-06-30 | 2027-07-12 | RHD4PRSHLDOSTC1000, RHD4PRSHLSTAGTC1000, RHD4CZ8A011TC2100 |
| RHD4CZ8A011TC2400 |  | Backfilling of HDPE Ducts for Telecom Network - (RD-A-1 /1)-Z8-A011-TC | 8d | 2027-07-13 | 2027-07-21 | RHD4CZ8A011TC2200 |
|  | 7869 | **RHD4-02-002-A011-(TC)-Telecommunications Manholes** |  | 2027-07-22 | 2027-07-28 |  |
| RHD4CZ8A011TC5100 |  | Excavation for Manholes for Telecom Network - (RD-A-1 /1)-Z8-A011-TC | 3d | 2027-07-22 | 2027-07-25 | RHD4ENSDZ8APPTC190, RHD4CZ8A011SL6100, RHD4CZ8A011TC2400 |
| RHD4CZ8A011TC5200 |  | Installation of Manholes for Telecom Network - (RD-A-1 /1)-Z8-A011-TC | 3d | 2027-07-26 | 2027-07-28 | RHD4PRSHLDOSTC1200, RHD4PRSHLSTAGTC1200, RHD4CZ8A011TC5100 |
|  | 7870 | **RHD4-02-002-A011-(TC)-Telecomminications Road Crossings** |  | 2026-08-18 | 2026-08-26 |  |
| RHD4CZ8A011TC3100 |  | Excavation for Road Crossings for Telecom Network - (RD-A-1 /1)-Z8-A011-TC | 2d | 2026-08-18 | 2026-08-19 | RHD4ENSDZ8APPTC190, RHD4CZ7L131ST1105 |
| RHD4CZ8A011TC3200 |  | Installation of Road Crossings for Telecom Network - (RD-A-1 /1)-Z8-A011-TC | 2d | 2026-08-20 | 2026-08-22 | RHD4PRSHLDOSTC1100, RHD4PRSHLSTAGTC1100, RHD4CZ8A011TC3100 |
| RHD4CZ8A011TC3300 |  | Pouring of Road Crossings for Telecom Network - (RD-A-1 /1)-Z8-A011-TC | 2d | 2026-08-23 | 2026-08-24 | RHD4CZ8A011TC3200 |
| RHD4CZ8A011TC3400 |  | Backfilling of Road Crossings for Telecom Network - (RD-A-1 /1)-Z8-A011-TC | 2d | 2026-08-25 | 2026-08-26 | RHD4CZ8A011TC3300 |
|  | 7871 | **RHD4-02-002-Z8-A011-Information and Communication Technologies - ICT** |  | 2027-07-29 | 2027-09-21 |  |
|  | 7872 | **RHD4-02-002-A011-(ICT)-Information and Communication Technologies Ducts** |  | 2027-07-29 | 2027-09-14 |  |
| RHD4CZ8A011ICT2100 |  | Excavation of HDPE Ducts for ICT Network - (RD-A-1 /1)-Z8-A011-ICT | 12d | 2027-07-29 | 2027-08-11 | RHD4ENSDZ8APPICT200, RHD4CZ8A011TC5200 |
| RHD4CZ8A011ICT2200 |  | Installation of HDPE Ducts for ICT Network - (RD-A-1 /1)-Z8-A011-ICT | 17d | 2027-08-12 | 2027-08-31 | RHD4PRSHLDOSICT1000, RHD4PRSHLSTAGICT1000, RHD4CZ8A011ICT2100 |
| RHD4CZ8A011ICT2400 |  | Backfilling of HDPE Ducts for ICT Network - (RD-A-1 /1)-Z8-A011-ICT | 12d | 2027-09-01 | 2027-09-14 | RHD4CZ8A011ICT2200 |
|  | 7873 | **RHD4-02-002-A011-(ICT)-Information and Communication Technologies Manholes** |  | 2027-09-15 | 2027-09-21 |  |
| RHD4CZ8A011ICT5100 |  | Excavation for Manholes for ICT Network - (RD-A-1 /1)-Z8-A011-ICT | 3d | 2027-09-15 | 2027-09-18 | RHD4ENSDZ8APPICT200, RHD4CZ8A011ICT2400 |
| RHD4CZ8A011ICT5200 |  | Installation of Manholes for ICT Network - (RD-A-1 /1)-Z8-A011-ICT | 3d | 2027-09-19 | 2027-09-21 | RHD4PRSHLDOSICT1200, RHD4PRSHLSTAGICT1200, RHD4CZ8A011ICT5100 |
|  | 7874 | **RHD4-02-002-A011-(ICT)-Information and Communication Technologies Road Crossings** |  |  |  |  |
|  | 7862 | **RHD4-02-002-Z8-A011-Landscape Network - LS** |  |  |  |  |
|  | 7863 | **RHD4-02-002-A011-(LS)-Landscape Lighting cables** |  |  |  |  |
|  | 7864 | **RHD4-02-002-A011-(LS)-Landscape Feeder Pillars** |  |  |  |  |
|  | 7865 | **RHD4-02-002-A011-(LS)-Landscape Bollard Poles** |  |  |  |  |
|  | 7866 | **RHD4-02-002-A011-(LS)-Landscape Feeder Pillars Earthing** |  |  |  |  |
|  | 7875 | **RHD4-02-002-Z8-A011-Security Network - CCTV** |  | 2027-09-22 | 2027-10-21 |  |
|  | 7876 | **RHD4-02-002-A011-(CCTV)-Civil Works** |  | 2027-09-22 | 2027-09-28 |  |
| RHD4CZ8A011CCTV2100 |  | Civil Works for Security Network - (RD-A-1 /1)-Z8-A011-CCTV | 5d | 2027-09-22 | 2027-09-28 | RHD4CZ8A011ICT5200 |
|  | 7877 | **RHD4-02-002-A011-(CCTV)-CCTV Poles** |  | 2027-09-29 | 2027-10-10 |  |
| RHD4CZ8A011CCTV1100 |  | Excavation for RC Base for CCTV Poles for Security Network - (RD-A-1 /1)-Z8-A011-CCTV | 2d | 2027-09-29 | 2027-09-30 | RHD4ENSDZ8APPCCTV210, RHD4CZ8A011CCTV2100 |
| RHD4CZ8A011CCTV1200 |  | Installation for RC Base for CCTV Poles for Security Network - (RD-A-1 /1)-Z8-A011-CCTV | 2d | 2027-10-02 | 2027-10-03 | RHD4CZ8A011CCTV1100 |
| RHD4CZ8A011CCTV1300 |  | Backfill for RC Base for CCTV Poles for Security Network - (RD-A-1 /1)-Z8-A011-CCTV | 2d | 2027-10-04 | 2027-10-05 | RHD4CZ8A011CCTV1200 |
| RHD4CZ8A011CCTV1400 |  | Installation for CCTV Poles for Security Network - (RD-A-1 /1)-Z8-A011-CCTV | 2d | 2027-10-06 | 2027-10-07 | RHD4PRSHLDOSCCTV1000, RHD4PRSHLSTACCTV1000, RHD4CZ8A011CCTV1300 |
| RHD4CZ8A011CCTV1500 |  | Protection post Installation for CCTV Poles for Security Network - (RD-A-1 /1)-Z8-A011-CCTV | 2d | 2027-10-09 | 2027-10-10 | RHD4CZ8A011CCTV1400 |
|  | 7878 | **RHD4-02-002-A011-(CCTV)-Camera** |  | 2027-10-11 | 2027-10-12 |  |
| RHD4CZ8A011CCTV3100 |  | Installation for Cameras for Security Network - (RD-A-1 /1)-Z8-A011-CCTV | 2d | 2027-10-11 | 2027-10-12 | RHD4PRSHLDOSCCTV1100, RHD4PRSHLSTACCTV1100, RHD4CZ8A011CCTV1400, RHD4CZ8A011CCTV4100 |
|  | 7879 | **RHD4-02-002-A011-(CCTV)-Power and Infrastructure** |  | 2027-10-09 | 2027-10-10 |  |
| RHD4CZ8A011CCTV4100 |  | Installation of Power outlet, UPS and midspan for PTZ Camerafor Cameras for Security Network - (RD-A-1 /1)-Z8-A011-CCTV | 2d | 2027-10-09 | 2027-10-10 | RHD4PRSHLDOSCCTV1300, RHD4PRSHLSTACCTV1300, RHD4CZ8A011CCTV1400 |
|  | 7881 | **RHD4-02-002-A011-(CCTV)-CCTV Panels and Components** |  | 2027-10-13 | 2027-10-21 |  |
| RHD4CZ8A011CCTV6100 |  | Installation for CCTV Panels for Security Network - (RD-A-1 /1)-Z8-A011-CCTV | 8d | 2027-10-13 | 2027-10-21 | RHD4PRSHLDOSCCTV1200, RHD4PRSHLSTACCTV1200, RHD4PRLOLSTACCTV1001, RHD4CZ8A011CCTV3100 |
|  | 7892 | **RHD4-02-002-Z8-RA04** |  | 2026-08-20 | 2028-04-02 |  |
|  | 8071 | **RHD4-02-002-Z8-RA04-Road Works - RD** |  | 2026-08-30 | 2028-04-02 |  |
|  | 8072 | **RHD4-02-002-RA04-(RD)-Subgrade** |  | 2026-08-30 | 2026-09-01 |  |
| RHD4CZ8RA04RD1100 |  | Supply, lay and compaction subgrade compacted thickness 300 mm for Roads - (ROUND-04)-Z8-RA04-RD | 3d | 2026-08-30 | 2026-09-01 | RHD4ENSDZ8APPEW100, RHD4ENSDZ8APPRD220, RHD4CZ8RA04TC3400 |
|  | 8073 | **RHD4-02-002-RA04-(RD)-Aggregate Base Course** |  | 2026-09-02 | 2026-09-07 |  |
| RHD4CZ8RA04RD2100 |  | Supply, lay and compaction Aggregate base course compacted thickness 300 mmfor Roads - (ROUND-04)-Z8-RA04-RD | 5d | 2026-09-02 | 2026-09-07 | RHD4PRSHLDOSRD1000, RHD4PRSHLSTAGRD1000, RHD4CZ8RA04RD1100 |
|  | 8074 | **RHD4-02-002-RA04-(RD)-Bituminous base course Two Layers, including (MC1)&(RC2)** |  | 2026-09-08 | 2027-06-05 |  |
| RHD4CZ8RA04RD3100 |  | Supply, lay and Asphaltic base course including Prime Coat (MC1) for 1st Layer - (ROUND-04)-Z8-RA04-RD | 3d | 2026-09-08 | 2026-09-10 | RHD4PRSHLDOSRD1100, RHD4ENMSASPH2000, RHD4ENMSASPH2010, RHD4PRSHLSTAGRD1100, RHD4CZ8RA04RD2100 |
| RHD4CZ8RA04RD3200 |  | Supply, lay and Asphaltic base course including Tack Coat (RC2) for 2nd Layer - (ROUND-04)-Z8-RA04-RD | 3d | 2027-06-02 | 2027-06-05 | RHD4PRSHLDOSRD1100, RHD4PRSHLSTAGRD1100, RHD4CZ8RA04CCTV6100 |
|  | 8076 | **RHD4-02-002-RA04-(RD)-Precast Concrete Curb** |  | 2027-11-03 | 2027-11-07 |  |
| RHD4CZ8RA04RD5100 |  | Supply and installation Precast Concrete Kerb for Roads - (ROUND-04)-Z8-RA04-RD | 4d | 2027-11-03 | 2027-11-07 | RHD4PRSHLDOSRD1200, RHD4ENMSRD2000, RHD4ENMSRD2010, RHD4PRSHLSTAGRD1200, RHD4CZ8RA04RD3200, RHD4CZ8A011RD5100, RHD4CZ4L014RD7100 |
|  | 8079 | **RHD4-02-002-RA04-(RD)-Traffic Signage** |  | 2027-11-08 | 2027-11-16 |  |
| RHD4CZ8RA04RD8100 |  | Installation of Traffic Signage for Road Network - (ROUND-04)-Z8-RA04-RD | 8d | 2027-11-08 | 2027-11-16 | RHD4PRSHLDOSRD1600, RHD4PRSHLSTAGRD1600, RHD4CZ8RA04RD5100 |
|  | 8077 | **RHD4-02-002-RA04-(RD)-Precast Interlocking Block Pavers** |  |  |  |  |

| ID | WBS | Task | Duration | Start | Finish | Predecessors |
| --- | --- | --- | --- | --- | --- | --- |
|  | 8075 | **RHD4-02-002-RA04-(RD)-Bituminous concrete wearing course including tack coat (RC2)** |  | 2027-11-08 | 2027-11-09 |  |
| RHD4CZ8RA04RD4100 |  | Supply, lay and compaction Asphaltic wearing course including tack Coat (RC2)for Road Network - (ROUND-04)-Z8-RA04-RD | 2d | 2027-11-08 | 2027-11-09 | RHD4CZ8RA04RD5100 |
|  | 8080 | **RHD4-02-002-RA04-(RD)-Speed Table and Wheel Stopper** |  | 2027-11-10 | 2027-11-22 |  |
| RHD4CZ8RA04RD9100 |  | Installation for Speed Bump for Road Network - (ROUND-04)-Z8-RA04-RD | 11d | 2027-11-10 | 2027-11-22 | RHD4CZ8RA04RD4100 |
|  | 8078 | **RHD4-02-002-RA04-(RD)-Pavement Marking** |  | 2028-03-29 | 2028-04-02 |  |
| RHD4CZ8RA04RD7100 |  | Pavement Markings for Road Network - (ROUND-04)-Z8-RA04-RD | 4d | 2028-03-29 | 2028-04-02 | RHD4PRSHLDOSRD1500, RHD4PRSHLSTAGRD1500, RHD4HOASZ1SUBTC190, RHD4HOASZ7SUBTC190, RHD4HOASZ8SUBTC190, RHD4HOASZ9SUBTC190, RHD4CZ8RA04RD4100, RHD4CZ8RA04RD9100 |
|  | 7896 | **RHD4-02-002-Z8-RA04-Storm Network - ST** |  |  |  |  |
|  | 7914 | **RHD4-02-002-RA04-(ST)-MH Works - 1500 mm diameter** |  |  |  |  |
|  | 7913 | **RHD4-02-002-RA04-(ST)-MH Works - 1200 mm diameter** |  |  |  |  |
|  | 7901 | **RHD4-02-002-RA04-(ST)-GRP Pipes - 800 mm diameter** |  |  |  |  |
|  | 7899 | **RHD4-02-002-RA04-(ST)-GRP Pipes - 600 mm diameter** |  |  |  |  |
|  | 7912 | **RHD4-02-002-RA04-(ST)-UPVC Pipes - 400 mm diameter** |  |  |  |  |
|  | 7911 | **RHD4-02-002-RA04-(ST)-UPVC Pipes - 300 mm diameter** |  |  |  |  |
|  | 7919 | **RHD4-02-002-RA04-(ST)-Concrete Encasement** |  |  |  |  |
|  | 7920 | **RHD4-02-002-Z8-RA04-Catch Basin - ST** |  |  |  |  |
|  | 7921 | **RHD4-02-002-RA04-(ST)-Single Catch Basin Works** |  |  |  |  |
|  | 7922 | **RHD4-02-002-RA04-(ST)-Double Catch Basin Works** |  |  |  |  |
|  | 8031 | **RHD4-02-002-Z8-RA04-Medium Voltage Network - MV** |  | 2027-01-26 | 2027-02-18 |  |
|  | 8034 | **RHD4-02-002-RA04-(MV)-Medium Voltage cables 3Cx 500 mm²** |  | 2027-01-26 | 2027-01-27 |  |
| RHD4CZ8RA04MV3400 |  | Termination of Medium Voltage Cables 3Cx 500 mm² - (ROUND-04)-Z8-RA04-MV | 2d | 2027-01-26 | 2027-01-27 | RHD4CZ8RA04RD3100, RHD4CZ4C012MV1200 |
|  | 8035 | **RHD4-02-002-RA04-(MV)-Medium Voltage cables 3Cx 50 mm²** |  | 2027-01-28 | 2027-02-03 |  |
| RHD4CZ8RA04MV3101 |  | Installation of Medium Voltage Cables 3Cx 50 mm² - (ROUND-04)-Z8-RA04-MV | 2d | 2027-01-28 | 2027-01-30 | RHD4PRSHLDOSMV1200, RHD4ENMSMV2000, RHD4ENMSMV2010, RHD4PRSHLSTAGMV1200, RHD4CZ8RA04MV3400 |
| RHD4CZ8RA04MV3301 |  | Testing of Medium Voltage Cables 3Cx 50 mm² - (ROUND-04)-Z8-RA04-MV | 2d | 2027-01-31 | 2027-02-01 | RHD4CZ8RA04MV3101 |
| RHD4CZ8RA04MV3401 |  | Termination of Medium Voltage Cables 3Cx 50 mm² - (ROUND-04)-Z8-RA04-MV | 2d | 2027-02-02 | 2027-02-03 | RHD4CZ8RA04MV3301 |
|  | 8037 | **RHD4-02-002-RA04-(MV)-Unit Substations** |  | 2027-02-04 | 2027-02-18 |  |
| RHD4CZ8RA04MV5100 |  | Excavation for Unit Substations for Medium Voltage Network - (ROUND-04)-Z8-RA04-MV | 2d | 2027-02-04 | 2027-02-06 | RHD4ENSDZ8APPMV150, RHD4CZ8RA04MV3401 |
| RHD4CZ8RA04MV5200 |  | Concrete Base Placement for Unit Substations for Medium Voltage Network - (ROUND-04)-Z8-RA04-MV | 2d | 2027-02-07 | 2027-02-08 | RHD4CZ8RA04MV5100 |
| RHD4CZ8RA04MV5300 |  | Installation for Fences and doors for Medium Voltage Network - (ROUND-04)-Z8-RA04-MV | 5d | 2027-02-09 | 2027-02-14 | RHD4CZ8RA04MV5200 |
| RHD4CZ8RA04MV5400 |  | Installation for Unit Substations for Medium Voltage Network - (ROUND-04)-Z8-RA04-MV | 4d | 2027-02-15 | 2027-02-18 | RHD4PRLOLSTAGMV1601, RHD4PRLOLSTAGMV1602, RHD4CZ8RA04MV5300 |
|  | 8038 | **RHD4-02-002-Z8-RA04-Low Voltage Network - LV** |  | 2027-02-20 | 2027-03-08 |  |
|  | 8039 | **RHD4-02-002-RA04-(LV)-Low Voltage duct banks** |  |  |  |  |
|  | 8040 | **RHD4-02-002-RA04-(LV)-Low Voltage Drawpit** |  |  |  |  |
|  | 8041 | **RHD4-02-002-RA04-(LV)-Low Voltage cables** |  | 2027-02-20 | 2027-03-01 |  |
| RHD4CZ8RA04LV3100 |  | Excavation for Low Voltage Cables for Low Voltage Network - (ROUND-04)-Z8-RA04-LV | 2d | 2027-02-20 | 2027-02-21 | RHD4ENSDZ8APPLV160, RHD4CZ8RA04MV5400 |
| RHD4CZ8RA04LV3200 |  | Cable Laying of Low Voltage Cables for Low Voltage Network - (ROUND-04)-Z8-RA04-LV | 2d | 2027-02-23 | 2027-02-24 | RHD4PRSHLDOSLV1100, RHD4ENMSLV2000, RHD4ENMSLV2010, RHD4PRSHLSTAGLV1100, RHD4CZ8RA04LV3100 |
| RHD4CZ8RA04LV3300 |  | Warning tape and Backfill for Low Voltage Cables for Low Voltage Network - (ROUND-04)-Z8-RA04-LV | 2d | 2027-02-25 | 2027-02-27 | RHD4CZ8RA04LV3200 |
| RHD4CZ8RA04LV3400 |  | Testing of Low Voltage Cables for Low Voltage Network - (ROUND-04)-Z8-RA04-LV | 2d | 2027-02-28 | 2027-03-01 | RHD4CZ8RA04LV3300 |
|  | 8042 | **RHD4-02-002-RA04-(LV)-Low Voltage Distribution Pillars** |  | 2027-03-02 | 2027-03-08 |  |
| RHD4CZ8RA04LV4100 |  | Leveling for Distribution Pillars for Low Voltage Network - (ROUND-04)-Z8-RA04-LV | 2d | 2027-03-02 | 2027-03-03 | RHD4CZ8RA04LV3400 |
| RHD4CZ8RA04LV4200 |  | Lean Concrete for Distribution Pillars for Low Voltage Network - (ROUND-04)-Z8-RA04-LV | 2d | 2027-03-04 | 2027-03-06 | RHD4CZ8RA04LV4100 |
| RHD4CZ8RA04LV4300 |  | Installation of Distribution Pillars for Low Voltage Network - (ROUND-04)-Z8-RA04-LV | 2d | 2027-03-07 | 2027-03-08 | RHD4PRSHLDOSLV1200, RHD4PRSHLDOSLV1300, RHD4PRSHLSTAGLV1200, RHD4PRSHLSTAGLV1300, RHD4CZ8RA04LV4200 |
|  | 8043 | **RHD4-02-002-RA04-(LV)-Low Voltage Distribution Pillars Earthing** |  |  |  |  |
|  | 8044 | **RHD4-02-002-Z8-RA04-Street Lighting Network - SL** |  | 2027-02-25 | 2027-04-10 |  |
|  | 8045 | **RHD4-02-002-RA04-(SL)-Street Lighting duct banks** |  | 2027-02-25 | 2027-03-17 |  |
| RHD4CZ8RA04SL2100 |  | Excavation of Duct Banks for Street Lighting Network - (ROUND-04)-Z8-RA04-SL | 4d | 2027-02-25 | 2027-03-01 | RHD4ENSDZ8APPSL170, RHD4CZ8RA04RA3000, RHD4CZ8RA04RD1100, RHD4CZ8C014SL2400 |
| RHD4CZ8RA04SL2200 |  | Installation of Duct Banks for Street Lighting Network - (ROUND-04)-Z8-RA04-SL | 5d | 2027-03-02 | 2027-03-07 | RHD4PRSHLDOSSL1000, RHD4PRSHLSTAGSL1000, RHD4CZ8RA04SL2100 |
| RHD4CZ8RA04SL2300 |  | Pouring of Duct Banks for Street Lighting Network - (ROUND-04)-Z8-RA04-SL | 4d | 2027-03-08 | 2027-03-15 | RHD4CZ8RA04SL2200 |
| RHD4CZ8RA04SL2400 |  | Backfilling of Duct Banks for Street Lighting Network - (ROUND-04)-Z8-RA04-SL | 2d | 2027-03-16 | 2027-03-17 | RHD4CZ8RA04SL2300 |
|  | 8046 | **RHD4-02-002-RA04-(SL)-Street Lighting Drawpit** |  | 2027-03-13 | 2027-03-16 |  |
| RHD4CZ8RA04SL5100 |  | Excavation of Drawpit size 600x600x900mm for Street Lighting Network - (ROUND-04)-Z8-RA04-SL | 2d | 2027-03-13 | 2027-03-14 | RHD4ENSDZ8APPSL170, RHD4CZ8RA04LV4300 |
| RHD4CZ8RA04SL5200 |  | Installation of Drawpit size 600x600x900mm for Street Lighting Network - (ROUND-04)-Z8-RA04-SL | 2d | 2027-03-15 | 2027-03-16 | RHD4PRSHLDOSSL1400, RHD4PRSHLSTAGSL1400, RHD4CZ8RA04SL5100 |
|  | 8047 | **RHD4-02-002-RA04-(SL)-Street Lighting cables** |  | 2027-03-17 | 2027-03-29 |  |
| RHD4CZ8RA04SL3100 |  | Excavation for Street Lighting Cables for Street Lighting Network - (ROUND-04)-Z8-RA04-SL | 3d | 2027-03-17 | 2027-03-20 | RHD4ENSDZ8APPSL170, RHD4CZ8RA04SL5200 |
| RHD4CZ8RA04SL3200 |  | Cable Laying of Street Lighting Cables for Street Lighting Network - (ROUND-04)-Z8-RA04-SL | 3d | 2027-03-21 | 2027-03-23 | RHD4PRSHLDOSSL1100, RHD4ENMSSL2000, RHD4ENMSSL2010, RHD4PRSHLSTAGSL1100, RHD4CZ8RA04SL3100 |
| RHD4CZ8RA04SL3300 |  | Warning tape and Backfill for Street Lighting Cables for Street Lighting Network - (ROUND-04)-Z8-RA04-SL | 3d | 2027-03-24 | 2027-03-27 | RHD4CZ8RA04SL3200 |
| RHD4CZ8RA04SL3400 |  | Testing of Street Lighting Cables for Street Lighting Network - (ROUND-04)-Z8-RA04-SL | 2d | 2027-03-28 | 2027-03-29 | RHD4CZ8RA04SL3300 |
|  | 8048 | **RHD4-02-002-RA04-(SL)-Street Lighting Poles** |  | 2027-03-30 | 2027-04-10 |  |
| RHD4CZ8RA04SL1100 |  | Excavation for RC Base for Lighting Poles for Street Lighting Network - (ROUND-04)-Z8-RA04-SL | 2d | 2027-03-30 | 2027-03-31 | RHD4ENSDZ8APPSL170, RHD4CZ8RA04SL3400 |
| RHD4CZ8RA04SL1200 |  | Installation for RC Base for Lighting Poles for Street Lighting Network - (ROUND-04)-Z8-RA04-SL | 2d | 2027-04-01 | 2027-04-03 | RHD4CZ8RA04SL1100 |
| RHD4CZ8RA04SL1300 |  | Backfill for RC Base for Lighting Poles for Street Lighting Network - (ROUND-04)-Z8-RA04-SL | 2d | 2027-04-04 | 2027-04-05 | RHD4CZ8RA04SL1200 |
| RHD4CZ8RA04SL1400 |  | Installation for Lighting Poles for Street Lighting Network - (ROUND-04)-Z8-RA04-SL | 2d | 2027-04-06 | 2027-04-07 | RHD4PRSHLDOSSL1200, RHD4ENMSSL2000, RHD4ENMSSL2010, RHD4PRSHLSTAGSL1200, RHD4CZ8RA04SL1300 |
| RHD4CZ8RA04SL1500 |  | Luminaire Installation for Lighting Poles for Street Lighting Network - (ROUND-04)-Z8-RA04-SL | 2d | 2027-04-08 | 2027-04-10 | RHD4PRSHLDOSSL1300, RHD4PRSHLSTAGSL1300, RHD4CZ8RA04SL1400 |
|  | 489 | **RHD4-02-002-Z8-RA04-Telecommunications Network - TC** |  | 2026-08-20 | 2027-05-10 |  |
|  | 490 | **RHD4-02-002-C081-(TC)-Telecommunications Ducts** |  | 2027-04-11 | 2027-05-10 |  |
| RHD4CZ8RA04TC2100 |  | Excavation of HDPE Ducts for Telecom Network - (ROUND-04)-Z8-RA04-TC | 10d | 2027-04-11 | 2027-04-21 | RHD4CZ8RA04SL1500 |
| RHD4CZ8RA04TC2200 |  | Installation of HDPE Ducts for Telecom Network - (ROUND-04)-Z8-RA04-TC | 8d | 2027-04-22 | 2027-05-01 | RHD4CZ8RA04TC2100 |
| RHD4CZ8RA04TC2400 |  | Backfilling of HDPE Ducts for Telecom Network - (ROUND-04)-Z8-RA04-TC | 8d | 2027-05-02 | 2027-05-10 | RHD4CZ8RA04TC2200, RHD4CZ8RA04TC5200 |
|  | 491 | **RHD4-02-002-C081-(TC)-Telecommunications Manholes** |  | 2027-04-22 | 2027-05-01 |  |
| RHD4CZ8RA04TC5100 |  | Excavation for Manholes for Telecom Network - (ROUND-04)-Z8-RA04-TC | 4d | 2027-04-22 | 2027-04-26 | RHD4CZ8RA04TC2100, RHD4CZ8RA04TC2100 FF |
| RHD4CZ8RA04TC5200 |  | Installation of Manholes for Telecom Network - (ROUND-04)-Z8-RA04-TC | 4d | 2027-04-27 | 2027-05-01 | RHD4CZ8RA04TC5100, RHD4CZ8RA04TC2200 SS |

| ID | WBS | Task | Duration | Start | Finish | Predecessors |
| --- | --- | --- | --- | --- | --- | --- |
|  | 5411 | **RHD4-02-002-C081-(TC)-Telecomminications Road Crossings** |  | 2026-08-20 | 2026-08-29 |  |
| RHD4CZ8RA04TC3100 |  | Excavation for Road Crossings for Telecom Network - (ROUND-04)-Z8-RA04-TC | 2d | 2026-08-20 | 2026-08-22 | RHD4CZ8A011TC3100 |
| RHD4CZ8RA04TC3200 |  | Installation of Road Crossings for Telecom Network - (ROUND-04)-Z8-RA04-TC | 2d | 2026-08-23 | 2026-08-24 | RHD4CZ8RA04TC3100 |
| RHD4CZ8RA04TC3300 |  | Pouring of Road Crossings for Telecom Network - (ROUND-04)-Z8-RA04-TC | 2d | 2026-08-25 | 2026-08-26 | RHD4CZ8RA04TC3200 |
| RHD4CZ8RA04TC3400 |  | Backfilling of Road Crossings for Telecom Network - (ROUND-04)-Z8-RA04-TC | 2d | 2026-08-27 | 2026-08-29 | RHD4CZ8RA04TC3300 |
|  | 8060 | **RHD4-02-002-Z8-RA04-Information and Communication Technologies - ICT** |  | 2027-04-11 | 2027-04-26 |  |
|  | 8061 | **RHD4-02-002-RA04-(ICT)-Information and Communication Technologies Ducts** |  | 2027-04-11 | 2027-04-26 |  |
| RHD4CZ8RA04ICT2100 |  | Excavation of HDPE Ducts for ICT Network - (ROUND-04)-Z8-RA04-ICT | 4d | 2027-04-11 | 2027-04-14 | RHD4ENSDZ8APPICT200, RHD4CZ8RA04SL1500 |
| RHD4CZ8RA04ICT2200 |  | Installation of HDPE Ducts for ICT Network - (ROUND-04)-Z8-RA04-ICT | 6d | 2027-04-15 | 2027-04-21 | RHD4PRSHLDOSICT1000, RHD4PRSHLSTAGICT1000, RHD4CZ8RA04ICT2100 |
| RHD4CZ8RA04ICT2400 |  | Backfilling of HDPE Ducts for ICT Network - (ROUND-04)-Z8-RA04-ICT | 4d | 2027-04-22 | 2027-04-26 | RHD4CZ8RA04ICT2200 |
|  | 8051 | **RHD4-02-002-Z8-RA04-Landscape Network - LS** |  |  |  |  |
|  | 8052 | **RHD4-02-002-RA04-(LS)-Landscape Lighting cables** |  |  |  |  |
|  | 8054 | **RHD4-02-002-RA04-(LS)-Landscape Bollard Poles** |  |  |  |  |
|  | 8064 | **RHD4-02-002-Z8-RA04-Security Network - CCTV** |  | 2027-04-27 | 2027-06-01 |  |
|  | 8065 | **RHD4-02-002-RA04-(CCTV)-Civil Works** |  | 2027-04-27 | 2027-05-02 |  |
| RHD4CZ8RA04CCTV2100 |  | Civil Works for Security Network - (ROUND-04)-Z8-RA04-CCTV | 5d | 2027-04-27 | 2027-05-02 | RHD4CZ8RA04ICT2400 |
|  | 8066 | **RHD4-02-002-RA04-(CCTV)-CCTV Poles** |  | 2027-05-03 | 2027-05-13 |  |
| RHD4CZ8RA04CCTV1100 |  | Excavation for RC Base for CCTV Poles for Security Network - (ROUND-04)-Z8-RA04-CCTV | 2d | 2027-05-03 | 2027-05-04 | RHD4ENSDZ8APPCCTV210, RHD4CZ8RA04TC5200, RHD4CZ8RA04CCTV2100 |
| RHD4CZ8RA04CCTV1200 |  | Installation for RC Base for CCTV Poles for Security Network - (ROUND-04)-Z8-RA04-CCTV | 2d | 2027-05-05 | 2027-05-06 | RHD4CZ8RA04CCTV1100 |
| RHD4CZ8RA04CCTV1300 |  | Backfill for RC Base for CCTV Poles for Security Network - (ROUND-04)-Z8-RA04-CCTV | 2d | 2027-05-08 | 2027-05-09 | RHD4CZ8RA04CCTV1200 |
| RHD4CZ8RA04CCTV1400 |  | Installation for CCTV Poles for Security Network - (ROUND-04)-Z8-RA04-CCTV | 2d | 2027-05-10 | 2027-05-11 | RHD4PRSHLDOSCCTV1000, RHD4PRSHLSTACCTV1000, RHD4CZ8RA04CCTV1300 |
| RHD4CZ8RA04CCTV1500 |  | Protection post Installation for CCTV Poles for Security Network - (ROUND-04)-Z8-RA04-CCTV | 2d | 2027-05-12 | 2027-05-13 | RHD4CZ8RA04CCTV1400 |
|  | 8067 | **RHD4-02-002-RA04-(CCTV)-Camera** |  | 2027-05-19 | 2027-05-20 |  |
| RHD4CZ8RA04CCTV3100 |  | Installation for Cameras for Security Network - (ROUND-04)-Z8-RA04-CCTV | 2d | 2027-05-19 | 2027-05-20 | RHD4PRSHLDOSCCTV1100, RHD4PRSHLSTACCTV1100, RHD4CZ8RA04CCTV1500 |
|  | 8068 | **RHD4-02-002-RA04-(CCTV)-Power and Infrastructure** |  | 2027-05-22 | 2027-05-23 |  |
| RHD4CZ8RA04CCTV4100 |  | Installation of Power outlet, UPS and midspan for PTZ Camerafor Cameras for Security Network - (ROUND-04)-Z8-RA04-CCTV | 2d | 2027-05-22 | 2027-05-23 | RHD4PRSHLDOSCCTV1300, RHD4PRSHLSTACCTV1300, RHD4CZ8RA04CCTV3100 |
|  | 8070 | **RHD4-02-002-RA04-(CCTV)-CCTV Panels and Components** |  | 2027-05-24 | 2027-06-01 |  |
| RHD4CZ8RA04CCTV6100 |  | Installation for CCTV Panels for Security Network - (ROUND-04)-Z8-RA04-CCTV | 8d | 2027-05-24 | 2027-06-01 | RHD4PRSHLDOSCCTV1200, RHD4PRSHLSTACCTV1200, RHD4PRLOLSTACCTV1001, RHD4CZ8RA04CCTV4100, RHD4CZ8RA04TC2400 |
|  | 7325 | **RHD4-02-002-Z8-L04** |  | 2026-08-20 | 2027-08-08 |  |
|  | 7356 | **RHD4-02-002-Z8-L04-Crossings Sewage Network - SWCr** |  |  |  |  |
|  | 7366 | **RHD4-02-002-L04-(SWCr)-MH Works - 1200 mm diameter** |  |  |  |  |
|  | 7368 | **RHD4-02-002-L04-(SWCr)-MH Works - 1500 mm diameter** |  |  |  |  |
|  | 7367 | **RHD4-02-002-L04-(SWCr)-MH Works - 1200 mm diameter with Back drop** |  |  |  |  |
|  | 7369 | **RHD4-02-002-L04-(SWCr)-MH Works - 1500 mm diameter with Back drop** |  |  |  |  |
|  | 7361 | **RHD4-02-002-L04-(SWCr)-GRP Pipes - 700 mm diameter** |  |  |  |  |
|  | 7362 | **RHD4-02-002-L04-(SWCr)-UPVC Pipes - 200 mm diameter** |  |  |  |  |
|  | 7400 | **RHD4-02-002-Z8-L04-Crossings Potable Network - PTCr** |  |  |  |  |
|  | 7402 | **RHD4-02-002-L04-(PTCr)-HDPE Pipes - 160 mm diameter** |  |  |  |  |
|  | 7401 | **RHD4-02-002-L04-(PTCr)-HDPE Pipes - 110 mm diameter** |  |  |  |  |
|  | 7406 | **RHD4-02-002-L04-(PTCr)-Gate Valves (Direct Buried)** |  |  |  |  |
|  | 7409 | **RHD4-02-002-L04-(PTCr)-Wash out Valve Chambers** |  |  |  |  |
|  | 7410 | **RHD4-02-002-L04-(PTCr)-Wash out Valves** |  |  |  |  |
|  | 7411 | **RHD4-02-002-L04-(PTCr)-Air Valve Chambers** |  |  |  |  |
|  | 7412 | **RHD4-02-002-L04-(PTCr)-Air Valves** |  |  |  |  |
|  | 7504 | **RHD4-02-002-Z8-L04-Road Works - RD** |  | 2026-08-30 | 2027-08-08 |  |
|  | 7505 | **RHD4-02-002-L04-(RD)-Subgrade** |  | 2026-08-30 | 2026-09-03 |  |
| RHD4CZ8L04RD1100 |  | Supply, lay and compaction subgrade compacted thickness 300 mm for Roads - (RD-L-04)-Z8-L04-RD | 5d | 2026-08-30 | 2026-09-03 | RHD4ENSDZ8APPEW100, RHD4ENSDZ8APPRD220, RHD4CZ8L04ICT3400 |
|  | 7506 | **RHD4-02-002-L04-(RD)-Aggregate Base Course** |  | 2026-09-05 | 2026-09-09 |  |
| RHD4CZ8L04RD2100 |  | Supply, lay and compaction Aggregate base course compacted thickness 300 mmfor Roads - (RD-L-04)-Z8-L04-RD | 5d | 2026-09-05 | 2026-09-09 | RHD4PRSHLDOSRD1000, RHD4PRSHLSTAGRD1000, RHD4CZ8L04RD1100 |
|  | 7507 | **RHD4-02-002-L04-(RD)-Bituminous base course Two Layers, including (MC1)&(RC2)** |  | 2026-09-10 | 2027-07-11 |  |
| RHD4CZ8L04RD3100 |  | Supply, lay and Asphaltic base course including Prime Coat (MC1) for 1st Layer - (RD-L-04)-Z8-L04-RD | 2d | 2026-09-10 | 2026-09-12 | RHD4PRSHLDOSRD1100, RHD4ENMSASPH2000, RHD4ENMSASPH2010, RHD4PRSHLSTAGRD1100, RHD4CZ8L04RD2100 |
| RHD4CZ8L04RD3200 |  | Supply, lay and Asphaltic base course including Tack Coat (RC2) for 2nd Layer - (RD-L-04)-Z8-L04-RD | 2d | 2027-07-10 | 2027-07-11 | RHD4PRSHLDOSRD1100, RHD4PRSHLSTAGRD1100, RHD4CZ8L04RD3100, RHD4CZ8L04CCTV6100, RHD4CZ8RA04RD3200 |
|  | 7509 | **RHD4-02-002-L04-(RD)-Precast Concrete Curb** |  | 2027-07-12 | 2027-07-18 |  |
| RHD4CZ8L04RD5100 |  | Supply and installation Precast Concrete Kerb for Roads - (RD-L-04)-Z8-L04-RD | 6d | 2027-07-12 | 2027-07-18 | RHD4PRSHLDOSRD1200, RHD4ENMSRD2000, RHD4ENMSRD2010, RHD4PRSHLSTAGRD1200, RHD4CZ8L04RD3200 |
|  | 7512 | **RHD4-02-002-L04-(RD)-Traffic Signage** |  | 2027-07-19 | 2027-07-25 |  |
| RHD4CZ8L04RD8100 |  | Installation of Traffic Signage for Road Network - (RD-L-04)-Z8-L04-RD | 6d | 2027-07-19 | 2027-07-25 | RHD4PRSHLDOSRD1600, RHD4PRSHLSTAGRD1600, RHD4CZ8L04RD5100, RHD4CZ5L08RD8100 |
|  | 7510 | **RHD4-02-002-L04-(RD)-Precast Interlocking Block Pavers** |  | 2027-07-26 | 2027-07-31 |  |
| RHD4CZ8L04RD6100 |  | Interlocking block pavers for sidewalk-footpath for Side walks and Parking areas - (RD-L-04)-Z8-L04-RD | 5d | 2027-07-26 | 2027-07-31 | RHD4PRSHLDOSRD1300, RHD4ENMSRD2000, RHD4ENMSRD2010, RHD4PRSHLSTAGRD1300, RHD4CZ8L04RD8100 |
|  | 7508 | **RHD4-02-002-L04-(RD)-Bituminous concrete wearing course including tack coat (RC2)** |  | 2027-08-01 | 2027-08-02 |  |
| RHD4CZ8L04RD4100 |  | Supply, lay and compaction Asphaltic wearing course including tack Coat (RC2)for Road Network - (RD-L-04)-Z8-L04-RD | 2d | 2027-08-01 | 2027-08-02 | RHD4CZ8L04RD5100, RHD4CZ8L04RD6100 |
|  | 7511 | **RHD4-02-002-L04-(RD)-Pavement Marking** |  | 2027-08-03 | 2027-08-08 |  |
| RHD4CZ8L04RD7100 |  | Pavement Markings for Road Network - (RD-L-04)-Z8-L04-RD | 5d | 2027-08-03 | 2027-08-08 | RHD4PRSHLDOSRD1500, RHD4PRSHLSTAGRD1500, RHD4CZ8L04RD4100 |
|  | 7329 | **RHD4-02-002-Z8-L04-Storm Network - ST** |  | 2026-10-17 | 2027-01-12 |  |
|  | 7348 | **RHD4-02-002-L04-(ST)-MH Works - 2000 mm diameter** |  | 2026-11-30 | 2026-12-10 |  |
| RHD4CZ8L04ST3102 |  | Excavation and PC Blinding works for MH 2000 mm - (RD-L-04)-Z8-L04-ST | 2d | 2026-11-30 | 2026-12-01 | RHD4ENSDZ8APPST110, RHD4ENMSST2000, RHD4CZ8A011ST3101, RHD4CZ8L04ST2100 |
| RHD4CZ8L04ST3202 |  | Installation of Base for MH 2000 mm - (RD-L-04)-Z8-L04-ST | 2d | 2026-12-02 | 2026-12-03 | RHD4PRSHLSTAGST1607, RHD4CZ8L04ST3102 |
| RHD4CZ8L04ST3302 |  | MH Ring and C.Slab works and Backfilling works for MH 2000 mm - (RD-L-04)-Z8-L04-ST | 2d | 2026-12-05 | 2026-12-06 | RHD4PRSHLDOSST1607, RHD4CZ8L04ST3202 |
| RHD4CZ8L04ST3402 |  | Steel Cover for MH 2000 mm - (RD-L-04)-Z8-L04-ST | 2d | 2026-12-07 | 2026-12-08 | RHD4PRSHLDOSST1707, RHD4PRSHLSTAGST1707, RHD4CZ8L04ST3302 |
| RHD4CZ8L04ST3502 |  | Finishing, Benching, Testing works for MH 2000 mm - (RD-L-04)-Z8-L04-ST | 2d | 2026-12-09 | 2026-12-10 | RHD4CZ8L04ST3402 |
|  | 1844 | **RHD4-02-002-L04-(ST)-GRP Pipes - 400 mm diameter** |  | 2026-10-31 | 2026-11-10 |  |

| ID | WBS | Task | Duration | Start | Finish | Predecessors |
| --- | --- | --- | --- | --- | --- | --- |
| RHD4CZ8L04ST1100 |  | Excavation works for GRP Pipe Line 400 mm - (RD-L-04)-Z8-L04-ST | 2d | 2026-10-31 | 2026-11-01 | RHD4CZ8L04ST1508, RHD4CZ8L04ST1101 |
| RHD4CZ8L04ST1200 |  | Bedding works for GRP Pipe Line 400 mm - (RD-L-04)-Z8-L04-ST | 2d | 2026-11-02 | 2026-11-03 | RHD4CZ8L04ST1100 |
| RHD4CZ8L04ST1300 |  | Installing for GRP Pipe Line 400 mm - (RD-L-04)-Z8-L04-ST | 2d | 2026-11-04 | 2026-11-05 | RHD4CZ8L04ST1200 |
| RHD4CZ8L04ST1400 |  | Primary Test for GRP Pipe Line 400 mm - (RD-L-04)-Z8-L04-ST | 2d | 2026-11-07 | 2026-11-08 | RHD4CZ8L04ST1300 |
| RHD4CZ8L04ST1500 |  | Backfilling and warning tape works for GRP Pipe Line 400 mm - (RD-L-04)-Z8-L04-ST | 2d | 2026-11-09 | 2026-11-10 | RHD4CZ8L04ST1400 |
|  | 1852 | **RHD4-02-002-L04-(ST)-GRP Pipes - 1200 mm diameter** |  | 2026-10-17 | 2026-10-27 |  |
| RHD4CZ8L04ST1108 |  | Excavation works for GRP Pipe Line 1200 mm - (RD-L-04)-Z8-L04-ST | 2d | 2026-10-17 | 2026-10-18 | RHD4CZ8L04RW3000, RHD4CZ6A015IRR1100 |
| RHD4CZ8L04ST1208 |  | Bedding works for GRP Pipe Line 1200 mm - (RD-L-04)-Z8-L04-ST | 2d | 2026-10-19 | 2026-10-20 | RHD4CZ8L04ST1108 |
| RHD4CZ8L04ST1308 |  | Installing for GRP Pipe Line 1200 mm - (RD-L-04)-Z8-L04-ST | 2d | 2026-10-21 | 2026-10-22 | RHD4CZ8L04ST1208 |
| RHD4CZ8L04ST1408 |  | Primary Test for GRP Pipe Line 1200 mm - (RD-L-04)-Z8-L04-ST | 2d | 2026-10-24 | 2026-10-25 | RHD4CZ8L04ST1308 |
| RHD4CZ8L04ST1508 |  | Backfilling and warning tape works for GRP Pipe Line 1200 mm - (RD-L-04)-Z8-L04-ST | 2d | 2026-10-26 | 2026-10-27 | RHD4CZ8L04ST1408 |
|  | 2414 | **RHD4-02-002-L04-(ST)-GRP Pipes - 600 mm diameter** |  | 2026-10-26 | 2026-11-05 |  |
| RHD4CZ8L04ST1102 |  | Excavation works for GRP Pipe Line 600 mm - (RD-L-04)-Z8-L04-ST | 2d | 2026-10-26 | 2026-10-27 | RHD4CZ8L04ST1103 |
| RHD4CZ8L04ST1202 |  | Bedding works for GRP Pipe Line 600 mm - (RD-L-04)-Z8-L04-ST | 2d | 2026-10-28 | 2026-10-29 | RHD4CZ8L04ST1102 |
| RHD4CZ8L04ST1302 |  | Installing for GRP Pipe Line 600 mm - (RD-L-04)-Z8-L04-ST | 2d | 2026-10-31 | 2026-11-01 | RHD4CZ8L04ST1202 |
| RHD4CZ8L04ST1402 |  | Primary Test for GRP Pipe Line 600 mm - (RD-L-04)-Z8-L04-ST | 2d | 2026-11-02 | 2026-11-03 | RHD4CZ8L04ST1302 |
| RHD4CZ8L04ST1502 |  | Backfilling and warning tape works for GRP Pipe Line 600 mm - (RD-L-04)-Z8-L04-ST | 2d | 2026-11-04 | 2026-11-05 | RHD4CZ8L04ST1402 |
|  | 3752 | **RHD4-02-002-L04-(ST)-MH Works - 1200 mm diameter** |  | 2026-12-09 | 2026-12-31 |  |
| RHD4CZ8L04ST3100 |  | Excavation and PC Blinding works for MH 1200 mm - (RD-L-04)-Z8-L04-ST | 4d | 2026-12-09 | 2026-12-13 | RHD4CZ8L04ST1500, RHD4CZ8L04ST1102, RHD4CZ8L04ST3101 |
| RHD4CZ8L04ST3200 |  | Installation of Base for MH 1200 mm - (RD-L-04)-Z8-L04-ST | 4d | 2026-12-14 | 2026-12-17 | RHD4CZ8L04ST3100, RHD4CZ4L09ST3501, RHD4CZ5L07PT4500 |
| RHD4CZ8L04ST3300 |  | MH Ring and C.Slab works and Backfilling works for MH 1200 mm - (RD-L-04)-Z8-L04-ST | 4d | 2026-12-19 | 2026-12-22 | RHD4CZ8L04ST3200, RHD4CSWL1B07D021004, RHD4CZ6C062SW3500 |
| RHD4CZ8L04ST3400 |  | Steel Cover for MH 1200 mm - (RD-L-04)-Z8-L04-ST | 4d | 2026-12-23 | 2026-12-27 | RHD4CZ8L04ST3300 |
| RHD4CZ8L04ST3500 |  | Finishing, Benching, Testing works for MH 1200 mm - (RD-L-04)-Z8-L04-ST | 4d | 2026-12-28 | 2026-12-31 | RHD4CZ8L04ST3400 |
|  | 3739 | **RHD4-02-002-L04-(ST)-GRP Pipes - 700 mm diameter** |  | 2026-10-24 | 2026-11-03 |  |
| RHD4CZ8L04ST1103 |  | Excavation works for GRP Pipe Line 700 mm - (RD-L-04)-Z8-L04-ST | 2d | 2026-10-24 | 2026-10-25 | RHD4CZ8L04ST1104 |
| RHD4CZ8L04ST1203 |  | Bedding works for GRP Pipe Line 700 mm - (RD-L-04)-Z8-L04-ST | 2d | 2026-10-26 | 2026-10-27 | RHD4CZ8L04ST1103 |
| RHD4CZ8L04ST1303 |  | Installing for GRP Pipe Line 700 mm - (RD-L-04)-Z8-L04-ST | 2d | 2026-10-28 | 2026-10-29 | RHD4CZ8L04ST1203 |
| RHD4CZ8L04ST1403 |  | Primary Test for GRP Pipe Line 700 mm - (RD-L-04)-Z8-L04-ST | 2d | 2026-10-31 | 2026-11-01 | RHD4CZ8L04ST1303 |
| RHD4CZ8L04ST1503 |  | Backfilling and warning tape works for GRP Pipe Line 700 mm - (RD-L-04)-Z8-L04-ST | 2d | 2026-11-02 | 2026-11-03 | RHD4CZ8L04ST1403 |
|  | 3737 | **RHD4-02-002-L04-(ST)-GRP Pipes - 500 mm diameter** |  | 2026-10-28 | 2026-11-08 |  |
| RHD4CZ8L04ST1101 |  | Excavation works for GRP Pipe Line 500 mm - (RD-L-04)-Z8-L04-ST | 2d | 2026-10-28 | 2026-10-29 | RHD4CZ8L04ST1102 |
| RHD4CZ8L04ST1201 |  | Bedding works for GRP Pipe Line 500 mm - (RD-L-04)-Z8-L04-ST | 2d | 2026-10-31 | 2026-11-01 | RHD4CZ8L04ST1101 |
| RHD4CZ8L04ST1301 |  | Installing for GRP Pipe Line 500 mm - (RD-L-04)-Z8-L04-ST | 2d | 2026-11-02 | 2026-11-03 | RHD4CZ8L04ST1201, RHD4CZ8L04ST1303 |
| RHD4CZ8L04ST1401 |  | Primary Test for GRP Pipe Line 500 mm - (RD-L-04)-Z8-L04-ST | 2d | 2026-11-04 | 2026-11-05 | RHD4CZ8L04ST1301 |
| RHD4CZ8L04ST1501 |  | Backfilling and warning tape works for GRP Pipe Line 500 mm - (RD-L-04)-Z8-L04-ST | 2d | 2026-11-07 | 2026-11-08 | RHD4CZ8L04ST1401, RHD4CZ8L04ST1503 |
|  | 7347 | **RHD4-02-002-L04-(ST)-MH Works - 1500 mm diameter** |  | 2026-12-02 | 2027-01-12 |  |
| RHD4CZ8L04ST3101 |  | Excavation and PC Blinding works for MH 1500 mm - (RD-L-04)-Z8-L04-ST | 6d | 2026-12-02 | 2026-12-08 | RHD4ENSDZ8APPST110, RHD4ENMSST2000, RHD4CZ8L04ST1501, RHD4CZ8L04ST3102, RHD4CZ8L04ST3102 FF |
| RHD4CZ8L04ST3201 |  | Installation of Base for MH 1500 mm - (RD-L-04)-Z8-L04-ST | 6d | 2026-12-09 | 2026-12-15 | RHD4PRSHLSTAGST1607, RHD4CZ8L04ST3101 |
| RHD4CZ8L04ST3301 |  | MH Ring and C.Slab works and Backfilling works for MH 1500 mm - (RD-L-04)-Z8-L04-ST | 6d | 2026-12-16 | 2026-12-22 | RHD4PRSHLDOSST1607, RHD4CZ8L04ST3201 |
| RHD4CZ8L04ST3401 |  | Steel Cover for MH 1500 mm - (RD-L-04)-Z8-L04-ST | 4d | 2026-12-23 | 2026-12-27 | RHD4PRSHLDOSST1707, RHD4PRSHLSTAGST1707, RHD4CZ8L04ST3301, RHD4CZ8L04ST3402 |
| RHD4CZ8L04ST3501 |  | Finishing, Benching, Testing works for MH 1500 mm - (RD-L-04)-Z8-L04-ST | 6d | 2027-01-06 | 2027-01-12 | RHD4CZ8L04ST3500, RHD4CZ8L04ST3401, RHD4CZ8L04ST2500 |
|  | 7337 | **RHD4-02-002-L04-(ST)-GRP Pipes - 1100 mm diameter** |  |  |  |  |
|  | 7336 | **RHD4-02-002-L04-(ST)-GRP Pipes - 1000 mm diameter** |  |  |  |  |
|  | 7335 | **RHD4-02-002-L04-(ST)-GRP Pipes - 900 mm diameter** |  | 2026-10-19 | 2026-10-29 |  |
| RHD4CZ8L04ST1105 |  | Excavation works for GRP Pipe Line 900 mm - (RD-L-04)-Z8-L04-ST | 2d | 2026-10-19 | 2026-10-20 | RHD4ENSDZ8APPST110, RHD4CZ8L04ST1108 |
| RHD4CZ8L04ST1205 |  | Bedding works for GRP Pipe Line 900 mm - (RD-L-04)-Z8-L04-ST | 2d | 2026-10-21 | 2026-10-22 | RHD4CZ8L04ST1105 |
| RHD4CZ8L04ST1305 |  | Installing for GRP Pipe Line 900 mm - (RD-L-04)-Z8-L04-ST | 2d | 2026-10-24 | 2026-10-25 | RHD4PRSHLSTAGST1007, RHD4CZ8L04ST1205, RHD4PRSHLDOSST1607, RHD4PRSHLPOST1000, RHD4PRSHLDOSST1007 |
| RHD4CZ8L04ST1405 |  | Primary Test for GRP Pipe Line 900 mm - (RD-L-04)-Z8-L04-ST | 2d | 2026-10-26 | 2026-10-27 | RHD4CZ8L04ST1305 |
| RHD4CZ8L04ST1505 |  | Backfilling and warning tape works for GRP Pipe Line 900 mm - (RD-L-04)-Z8-L04-ST | 2d | 2026-10-28 | 2026-10-29 | RHD4CZ8L04ST1405 |
|  | 7334 | **RHD4-02-002-L04-(ST)-GRP Pipes - 800 mm diameter** |  | 2026-10-21 | 2026-11-01 |  |
| RHD4CZ8L04ST1104 |  | Excavation works for GRP Pipe Line 800 mm - (RD-L-04)-Z8-L04-ST | 2d | 2026-10-21 | 2026-10-22 | RHD4ENSDZ8APPST110, RHD4CZ8L04ST1105 |
| RHD4CZ8L04ST1204 |  | Bedding works for GRP Pipe Line 800 mm - (RD-L-04)-Z8-L04-ST | 2d | 2026-10-24 | 2026-10-25 | RHD4CZ8L04ST1104 |
| RHD4CZ8L04ST1304 |  | Installing for GRP Pipe Line 800 mm - (RD-L-04)-Z8-L04-ST | 2d | 2026-10-26 | 2026-10-27 | RHD4PRSHLSTAGST1007, RHD4CZ8L04ST1204, RHD4CZ8L04ST1305, RHD4PRSHLDOSST1607, RHD4PRSHLPOST1000, RHD4PRSHLDOSST1007 |
| RHD4CZ8L04ST1404 |  | Primary Test for GRP Pipe Line 800 mm - (RD-L-04)-Z8-L04-ST | 2d | 2026-10-28 | 2026-10-29 | RHD4CZ8L04ST1304 |
| RHD4CZ8L04ST1504 |  | Backfilling and warning tape works for GRP Pipe Line 800 mm - (RD-L-04)-Z8-L04-ST | 2d | 2026-10-31 | 2026-11-01 | RHD4CZ8L04ST1404, RHD4CZ8L04ST1505 |
|  | 7344 | **RHD4-02-002-L04-(ST)-UPVC Pipes - 300 mm diameter** |  | 2026-11-02 | 2027-01-05 |  |
| RHD4CZ8L04ST2100 |  | Excavation works for UPVC Pipe Line 300 mm - (RD-L-04)-Z8-L04-ST | 2d | 2026-11-02 | 2026-11-03 | RHD4ENSDZ8APPST110, RHD4CZ8L04ST1100 |
| RHD4CZ8L04ST2200 |  | Bedding works for UPVC Pipe Line 300 mm - (RD-L-04)-Z8-L04-ST | 2d | 2026-11-04 | 2026-11-05 | RHD4CZ8L04ST2100 |
| RHD4CZ8L04ST2300 |  | Installing for UPVC Pipe Line 300 mm - (RD-L-04)-Z8-L04-ST | 2d | 2026-12-30 | 2026-12-31 | RHD4PRSHLDOSST1107, RHD4PRSHLSTAGST1107, RHD4CZ8L04ST2200, RHD4CZ8L04ST7300 |
| RHD4CZ8L04ST2400 |  | Primary Test for UPVC Pipe Line 300 mm - (RD-L-04)-Z8-L04-ST | 2d | 2027-01-02 | 2027-01-03 | RHD4CZ8L04ST2300 |
| RHD4CZ8L04ST2500 |  | Backfilling and warning tape works for UPVC Pipe Line 300 mm - (RD-L-04)-Z8-L04-ST | 2d | 2027-01-04 | 2027-01-05 | RHD4CZ8L04ST2400, RHD4CZ8L04ST6100 |
|  | 7352 | **RHD4-02-002-L04-(ST)-Concrete Encasement** |  | 2026-12-30 | 2026-12-31 |  |
| RHD4CZ8L04ST6100 |  | Pipe Encasement for Storm Pipelines - (RD-L-04)-Z8-L04-ST | 2d | 2026-12-30 | 2026-12-31 | RHD4CZ8L04ST2300 SS, RHD4CZ8L04ST2300 FF, RHD4CZ8L04ST2200 |
|  | 7353 | **RHD4-02-002-Z8-L04-Catch Basin - ST** |  | 2026-12-23 | 2027-01-30 |  |
|  | 7354 | **RHD4-02-002-L04-(ST)-Single Catch Basin Works** |  | 2026-12-23 | 2027-01-30 |  |
| RHD4CZ8L04ST7100 |  | Excavation works for Single Catch Basin - (RD-L-04)-Z8-L04-ST | 2d | 2026-12-23 | 2026-12-24 | RHD4ENSDZ8APPST110, RHD4CZ8L04ST3300 |
| RHD4CZ8L04ST7200 |  | PC Blinding, Installation and Pipe connection for Single Catch Basin - (RD-L-04)-Z8-L04-ST | 2d | 2026-12-26 | 2026-12-27 | RHD4CZ8L04ST7100 |
| RHD4CZ8L04ST7300 |  | Rings & C.Slab & Final Backfill for Single Catch Basin - (RD-L-04)-Z8-L04-ST | 2d | 2026-12-28 | 2026-12-29 | RHD4PRSHLDOSST1307, RHD4PRSHLSTAGST1307, RHD4CZ8L04ST7200 |
| RHD4CZ8L04ST7400 |  | Steel Cover for Single Catch Basin - (RD-L-04)-Z8-L04-ST | 2d | 2027-01-25 | 2027-01-26 | RHD4PRSHLDOSST1707, RHD4CZ8L04ST7300, RHD4CZ8L04PT4300 |
| RHD4CZ8L04ST7500 |  | Finishing and Insulation works for Single Catch Basin - (RD-L-04)-Z8-L04-ST | 3d | 2027-01-27 | 2027-01-30 | RHD4CZ8L04ST3501, RHD4CZ8L04ST7400 |

| ID | WBS | Task | Duration | Start | Finish | Predecessors |
| --- | --- | --- | --- | --- | --- | --- |
|  | 6409 | **RHD4-02-002-L016-(ST)-Double Catch Basin Works** |  | 2026-12-26 | 2027-01-05 |  |
| RHD4CZ8L04ST8100 |  | Excavation works for Double Catch Basin - (RD-L-16)-Z5-L016-ST | 2d | 2026-12-26 | 2026-12-27 | RHD4CZ8L04ST7100 |
| RHD4CZ8L04ST8200 |  | PC Blinding, Installation and Pipe connection for Double Catch Basin - (RD-L-16)-Z5-L016-ST | 2d | 2026-12-28 | 2026-12-29 | RHD4CZ8L04ST8100 |
| RHD4CZ8L04ST8300 |  | Rings & C.Slab & Final Backfillfor Double Catch Basin - (RD-L-16)-Z5-L016-ST | 2d | 2026-12-30 | 2026-12-31 | RHD4CZ8L04ST8200 |
| RHD4CZ8L04ST8400 |  | Steel Cover for Double Catch Basin - (RD-L-16)-Z5-L016-ST | 2d | 2027-01-02 | 2027-01-03 | RHD4CZ8L04ST8300 |
| RHD4CZ8L04ST8500 |  | Finishing and Insulation works for Double Catch Basin - (RD-L-16)-Z5-L016-ST | 2d | 2027-01-04 | 2027-01-05 | RHD4CZ8L04ST8400 |
|  | 7378 | **RHD4-02-002-Z8-L04-Sewage Network - SW** |  | 2027-01-02 | 2027-02-03 |  |
|  | 7383 | **RHD4-02-002-L04-(SW)-GRP Pipes - 700 mm diameter** |  |  |  |  |
|  | 957 | **RHD4-02-002-L04-(SW)-MH Works - 1200 mm diameter with Back drop** |  | 2027-01-11 | 2027-01-21 |  |
| RHD4CZ8L04SW3101 |  | Excavation and PC Blinding works for MH 1200 mm - (RD-L-04)-Z8-L04-SW | 2d | 2027-01-11 | 2027-01-12 | RHD4CZ8L04ST8500, RHD4CZ8L04SW2300 |
| RHD4CZ8L04SW3201 |  | Installation of Base for MH 1200 mm - (RD-L-04)-Z8-L04-SW | 2d | 2027-01-13 | 2027-01-14 | RHD4CZ8L04SW3101 |
| RHD4CZ8L04SW3301 |  | MH Ring and C.Slab works and Backfilling works for MH 1200 mm - (RD-L-04)-Z8-L04-SW | 2d | 2027-01-16 | 2027-01-17 | RHD4CZ8L04SW3201 |
| RHD4CZ8L04SW3401 |  | Steel Cover for MH 1200 mm - (RD-L-04)-Z8-L04-SW | 2d | 2027-01-18 | 2027-01-19 | RHD4CZ8L04SW3301 |
| RHD4CZ8L04SW3501 |  | Finishing, Benching, Testing works for MH 1200 mm - (RD-L-04)-Z8-L04-SW | 2d | 2027-01-20 | 2027-01-21 | RHD4CZ8L04SW3401 |
|  | 3794 | **RHD4-02-002-L04-(SW)-MH Works - 1200 mm diameter** |  | 2027-01-13 | 2027-02-03 |  |
| RHD4CZ8L04SW3100 |  | Excavation and PC Blinding works for MH 1200 mm - (RD-L-04)-Z8-L04-SW | 3d | 2027-01-13 | 2027-01-16 | RHD4CZ8L04SW3101 |
| RHD4CZ8L04SW3200 |  | Installation of Base for MH 1200 mm - (RD-L-04)-Z8-L04-SW | 4d | 2027-01-17 | 2027-01-20 | RHD4CZ8L04SW3100 |
| RHD4CZ8L04SW3300 |  | MH Ring and C.Slab works and Backfilling works for MH 1200 mm - (RD-L-04)-Z8-L04-SW | 4d | 2027-01-21 | 2027-01-25 | RHD4CZ8L04SW3200 |
| RHD4CZ8L04SW3400 |  | Steel Cover for MH 1200 mm - (RD-L-04)-Z8-L04-SW | 4d | 2027-01-26 | 2027-01-30 | RHD4CZ8L04SW3300 |
| RHD4CZ8L04SW3500 |  | Finishing, Benching, Testing works for MH 1200 mm - (RD-L-04)-Z8-L04-SW | 4d | 2027-01-31 | 2027-02-03 | RHD4CZ8L04SW3400 |
|  | 3785 | **RHD4-02-002-L04-(SW)-GRP Pipes - 300 mm diameter** |  | 2027-01-02 | 2027-01-12 |  |
| RHD4CZ8L04SW1100 |  | Excavation works for GRP Pipe Line 300 mm - (RD-L-04)-Z8-L04-SW | 2d | 2027-01-02 | 2027-01-03 | RHD4CZ8L04ST6100, RHD4CZ8L04ST2100 |
| RHD4CZ8L04SW1200 |  | Bedding works for GRP Pipe Line 300 mm - (RD-L-04)-Z8-L04-SW | 2d | 2027-01-04 | 2027-01-05 | RHD4CZ8L04SW1100 |
| RHD4CZ8L04SW1300 |  | Installing for GRP Pipe Line 300 mm - (RD-L-04)-Z8-L04-SW | 2d | 2027-01-06 | 2027-01-07 | RHD4CZ8L04SW1200 |
| RHD4CZ8L04SW1400 |  | Primary Test for GRP Pipe Line 300 mm - (RD-L-04)-Z8-L04-SW | 2d | 2027-01-09 | 2027-01-10 | RHD4CZ8L04SW1300 |
| RHD4CZ8L04SW1500 |  | Backfilling and warning tape works for GRP Pipe Line 300 mm - (RD-L-04)-Z8-L04-SW | 2d | 2027-01-11 | 2027-01-12 | RHD4CZ8L04SW1400 |
|  | 3790 | **RHD4-02-002-L04-(SW)-UPVC Pipes - 200 mm diameter** |  | 2027-01-04 | 2027-01-14 |  |
| RHD4CZ8L04SW2100 |  | Excavation works for UPVC Pipe Line 200 mm - (RD-L-04)-Z8-L04-SW | 2d | 2027-01-04 | 2027-01-05 | RHD4CZ8L04SW1100 |
| RHD4CZ8L04SW2200 |  | Bedding works for UPVC Pipe Line 200 mm - (RD-L-04)-Z8-L04-SW | 2d | 2027-01-06 | 2027-01-07 | RHD4CZ8L04SW2100, RHD4CZ8L04SW1200 |
| RHD4CZ8L04SW2300 |  | Installing for UPVC Pipe Line 200 mm - (RD-L-04)-Z8-L04-SW | 2d | 2027-01-09 | 2027-01-10 | RHD4CZ8L04SW2200, RHD4CZ8L04SW1300 |
| RHD4CZ8L04SW2400 |  | Primary Test for UPVC Pipe Line 200 mm - (RD-L-04)-Z8-L04-SW | 2d | 2027-01-11 | 2027-01-12 | RHD4CZ8L04SW2300, RHD4CZ8L04SW1400 |
| RHD4CZ8L04SW2500 |  | Backfilling and warning tape works for UPVC Pipe Line 200 mm - (RD-L-04)-Z8-L04-SW | 2d | 2027-01-13 | 2027-01-14 | RHD4CZ8L04SW2400, RHD4CZ8L04SW1500 |
|  | 7387 | **RHD4-02-002-L04-(SW)-Concrete Encasement** |  |  |  |  |
|  | 7415 | **RHD4-02-002-Z8-L04-Potable Network - PT** |  | 2027-01-06 | 2027-02-08 |  |
|  | 7417 | **RHD4-02-002-L04-(PT)-HDPE Pipes - 160 mm diameter** |  | 2027-01-06 | 2027-02-03 |  |
| RHD4CZ8L04PT1101 |  | Excavation works for HDPE Pipline 160 mm - (RD-L-04)-Z8-L04-PT | 2d | 2027-01-06 | 2027-01-07 | RHD4ENSDZ8APPPT130, RHD4ENMSPT2000, RHD4CZ8L04SW2100, RHD4CZ5L08IRR3202 |
| RHD4CZ8L04PT1201 |  | Bedding works for HDPE Pipline 160 mm - (RD-L-04)-Z8-L04-PT | 3d | 2027-01-09 | 2027-01-11 | RHD4CZ8L04PT1101 |
| RHD4CZ8L04PT1301 |  | Installing for HDPE Pipline 160 mm - (RD-L-04)-Z8-L04-PT | 9d | 2027-01-12 | 2027-01-21 | RHD4PRSHLDOSPT1000, RHD4PRSHLSTAGPT1000, RHD4CZ8L04PT1201 |
| RHD4CZ8L04PT1401 |  | Primary Test for HDPE Pipline 160 mm - (RD-L-04)-Z8-L04-PT | 4d | 2027-01-23 | 2027-01-26 | RHD4CZ8L04PT1301 |
| RHD4CZ8L04PT1501 |  | Backfilling and warning tape works for HDPE Pipline 160 mm - (RD-L-04)-Z8-L04-PT | 7d | 2027-01-27 | 2027-02-03 | RHD4CZ8L04PT1401 |
|  | 6478 | **RHD4-02-002-L04-(PT)-Wash out Valve Chambers** |  | 2027-01-11 | 2027-01-19 |  |
| RHD4CZ8L04PT2101 |  | Excavation and Bedding for Wash out Valve Chambers for Potable Water Network - (RD-L-04)-Z8-L04-PT | 2d | 2027-01-11 | 2027-01-12 | RHD4CZ8L04PT1100 |
| RHD4CZ8L04PT2201 |  | PC works for Wash out Valve Chambers for Potable Water Network - (RD-L-04)-Z8-L04-PT | 2d | 2027-01-13 | 2027-01-14 | RHD4CZ8L04PT2101 |
| RHD4CZ8L04PT2301 |  | Installation for Wash out Valve Chambers for Potable Water Network - (RD-L-04)-Z8-L04-PT | 2d | 2027-01-16 | 2027-01-17 | RHD4CZ8L04PT2201 |
| RHD4CZ8L04PT2401 |  | Backfilling works for Wash out Valve Chambers for Potable Water Network - (RD-L-04)-Z8-L04-PT | 2d | 2027-01-18 | 2027-01-19 | RHD4CZ8L04PT2301 |
|  | 6479 | **RHD4-02-002-L04-(PT)-Wash out Valves** |  | 2027-01-18 | 2027-01-21 |  |
| RHD4CZ8L04PT3102 |  | Installation for Wash out Valves for Potable Water Network - (RD-L-04)-Z8-L04-PT | 2d | 2027-01-18 | 2027-01-19 | RHD4CZ8L04PT2301 |
| RHD4CZ8L04PT3202 |  | Stem and Service box for Wash out Valves for Potable Water Network - (RD-L-04)-Z8-L04-PT | 2d | 2027-01-20 | 2027-01-21 | RHD4CZ8L04PT3102, RHD4CZ8L04PT2401 |
|  | 6102 | **RHD4-02-002-L04-(PT)-Air Valve Chambers** |  | 2027-01-13 | 2027-01-21 |  |
| RHD4CZ8L04PT2102 |  | Excavation and Bedding for Air Valve Chambers for Potable Water Network - (RD-L-04)-Z8-L04-PT | 2d | 2027-01-13 | 2027-01-14 | RHD4CZ8L04PT2101 |
| RHD4CZ8L04PT2202 |  | PC works for Air Valve Chambers for Potable Water Network - (RD-L-04)-Z8-L04-PT | 2d | 2027-01-16 | 2027-01-17 | RHD4CZ8L04PT2102 |
| RHD4CZ8L04PT2302 |  | Installation for Air Valve Chambers for Potable Water Network - (RD-L-04)-Z8-L04-PT | 2d | 2027-01-18 | 2027-01-19 | RHD4CZ8L04PT2202 |
| RHD4CZ8L04PT2402 |  | Backfilling works for Air Valve Chambers for Potable Water Network - (RD-L-04)-Z8-L04-PT | 2d | 2027-01-20 | 2027-01-21 | RHD4CZ8L04PT2302 |
|  | 6103 | **RHD4-02-002-L04-(PT)-Air Valves** |  | 2027-01-20 | 2027-01-24 |  |
| RHD4CZ8L04PT3103 |  | Installation for Air Valves for Potable Water Network - (RD-L-04)-Z8-L04-PT | 2d | 2027-01-20 | 2027-01-21 | RHD4CZ8L04PT2302 |
| RHD4CZ8L04PT3203 |  | Stem and Service box for Air Valves for Potable Water Network - (RD-L-04)-Z8-L04-PT | 2d | 2027-01-23 | 2027-01-24 | RHD4CZ8L04PT3103, RHD4CZ8L04PT2402, RHD4CZ8L04PT3202 |
|  | 7416 | **RHD4-02-002-L04-(PT)-HDPE Pipes - 110 mm diameter** |  | 2027-01-09 | 2027-01-19 |  |
| RHD4CZ8L04PT1100 |  | Excavation works for HDPE Pipline 110 mm - (RD-L-04)-Z8-L04-PT | 2d | 2027-01-09 | 2027-01-10 | RHD4ENSDZ8APPPT130, RHD4ENMSPT2000, RHD4CZ8L04PT1101 |
| RHD4CZ8L04PT1200 |  | Bedding works for HDPE Pipline 110 mm - (RD-L-04)-Z8-L04-PT | 2d | 2027-01-11 | 2027-01-12 | RHD4CZ8L04PT1100 |
| RHD4CZ8L04PT1300 |  | Installing for HDPE Pipline 110 mm - (RD-L-04)-Z8-L04-PT | 2d | 2027-01-13 | 2027-01-14 | RHD4PRSHLDOSPT1000, RHD4PRSHLSTAGPT1000, RHD4CZ8L04PT1200, RHD4CZ9L02SW2500 |
| RHD4CZ8L04PT1400 |  | Primary Test for HDPE Pipline 110 mm - (RD-L-04)-Z8-L04-PT | 2d | 2027-01-16 | 2027-01-17 | RHD4CZ8L04PT1300 |
| RHD4CZ8L04PT1500 |  | Backfilling and warning tape works for HDPE Pipline 110 mm - (RD-L-04)-Z8-L04-PT | 2d | 2027-01-18 | 2027-01-19 | RHD4CZ8L04PT1400 |
|  | 7421 | **RHD4-02-002-L04-(PT)-Gate Valves (Direct Buried)** |  | 2027-01-18 | 2027-02-08 |  |
| RHD4CZ8L04PT3100 |  | Installation for Direct Buried Gate Valves - (RD-L-04)-Z8-L04-PT | 4d | 2027-01-18 | 2027-01-21 | RHD4PRSHLDOSPT1200, RHD4PRSHLSTAGPT1200, RHD4CZ8L04PT1301 FF, RHD4CZ8L04PT1300 FF, RHD4CZ8L04PT1301 SS, RHD4CZ8L04PT1300 SS |
| RHD4CZ8L04PT3200 |  | Stem and Service box for Direct Buried Gate Valves - (RD-L-04)-Z8-L04-PT | 4d | 2027-02-04 | 2027-02-08 | RHD4PRSHLDOSPT1300, RHD4PRSHLSTAGPT1300, RHD4CZ8L04PT3100, RHD4CZ8L04PT1501, RHD4CZ8L04PT1500 |
|  | 7428 | **RHD4-02-002-L04-(PT)-Fire Hydrant** |  | 2027-01-11 | 2027-02-04 |  |
| RHD4CZ8L04PT4100 |  | Excavation and Bedding and Pipe Installation for Fire Hydrant - (RD-L-04)-Z8-L04-PT | 3d | 2027-01-11 | 2027-01-13 | RHD4ENSDZ8APPPT130, RHD4CZ8L04PT1100 |
| RHD4CZ8L04PT4200 |  | Valve Installation for Fire Hydrant - (RD-L-04)-Z8-L04-PT | 3d | 2027-01-14 | 2027-01-17 | RHD4CZ8L04PT4100 |
| RHD4CZ8L04PT4300 |  | Stem for Fire Hydrant - (RD-L-04)-Z8-L04-PT | 6d | 2027-01-18 | 2027-01-24 | RHD4CZ8L04PT4200 |
| RHD4CZ8L04PT4400 |  | Fire Installation for Fire Hydrant - (RD-L-04)-Z8-L04-PT | 6d | 2027-01-25 | 2027-01-31 | RHD4PRSHLDOSPT1500, RHD4PRSHLSTAGPT1500, RHD4CZ8L04PT4300 |

| ID | WBS | Task | Duration | Start | Finish | Predecessors |
| --- | --- | --- | --- | --- | --- | --- |
| RHD4CZ8L04PT4500 |  | Protection Barriers for Fire Hydrant - (RD-L-04)-Z8-L04-PT | 4d | 2027-02-01 | 2027-02-04 | RHD4CZ4L01PT4500, RHD4CZ8L04PT4400 |
|  | 7430 | **RHD4-02-002-Z8-L04-Irrigation Network - IRR** |  | 2027-01-20 | 2027-03-13 |  |
|  | 7431 | **RHD4-02-002-L04-(IRR)-HDPE Pipes - 160 mm diameter** |  | 2027-01-23 | 2027-03-04 |  |
| RHD4CZ8L04IRR1100 |  | Excavation works for HDPE Pipline 160 mm - (RD-L-04)-Z8-L04-IRR | 6d | 2027-01-23 | 2027-01-28 | RHD4ENSDZ8APPIRR140, RHD4ENMSRR2000, RHD4CZ8L04IRR1103 |
| RHD4CZ8L04IRR1200 |  | Bedding works for HDPE Pipline 160 mm - (RD-L-04)-Z8-L04-IRR | 8d | 2027-01-30 | 2027-02-07 | RHD4CZ8L04IRR1100 |
| RHD4CZ8L04IRR1300 |  | Installing for HDPE Pipline 160 mm - (RD-L-04)-Z8-L04-IRR | 10d | 2027-02-08 | 2027-02-18 | RHD4PRSHLDOSIRR1000, RHD4PRSHLSTAGIRR1000, RHD4CZ8L04IRR1200 |
| RHD4CZ8L04IRR1400 |  | Primary Test for HDPE Pipline 160 mm - (RD-L-04)-Z8-L04-IRR | 3d | 2027-02-20 | 2027-02-23 | RHD4CZ8L04IRR1300, RHD4CZ8L04IRR3100 |
| RHD4CZ8L04IRR1500 |  | Backfilling and warning tape works for HDPE Pipline 160 mm - (RD-L-04)-Z8-L04-IRR | 8d | 2027-02-24 | 2027-03-04 | RHD4CZ8L04IRR1400 |
|  | 7439 | **RHD4-02-002-L04-(IRR)-Gate Valves (Direct Buried)** |  | 2027-02-15 | 2027-03-13 |  |
| RHD4CZ8L04IRR3100 |  | Installation for Direct Buried Gate Valves - (RD-L-04)-Z8-L04-IRR | 4d | 2027-02-15 | 2027-02-18 | RHD4PRSHLDOSIRR1100, RHD4PRSHLSTAGIRR1100, RHD4CZ8L04IRR1300 SS, RHD4CZ8L04IRR1300 FF |
| RHD4CZ8L04IRR3200 |  | Stem and Service box for Direct Buried Gate Valves - (RD-L-04)-Z8-L04-IRR | 4d | 2027-03-06 | 2027-03-13 | RHD4PRSHLDOSIRR1300, RHD4PRSHLSTAGIRR1300, RHD4CZ8L04IRR3100, RHD4CZ8L04IRR1500 |
|  | 7432 | **RHD4-02-002-L04-(IRR)-HDPE Pipes - 180 mm diameter** |  |  |  |  |
|  | 1770 | **RHD4-02-002-L04-(IRR)-Air Valves** |  | 2027-03-02 | 2027-03-07 |  |
| RHD4CZ8L04IRR3103 |  | Installation for Air Valves for Irrigation Network - (RD-L-04)-Z8-L04-IRR | 2d | 2027-03-02 | 2027-03-03 | RHD4CZ8L04IRR2302 |
| RHD4CZ8L04IRR3203 |  | Stem and Service box for Air Valves for Irrigation Network - (RD-L-04)-Z8-L04-IRR | 3d | 2027-03-04 | 2027-03-07 | RHD4CZ8L04IRR3103, RHD4CZ8L04IRR2402, RHD4CZ8L04IRR3202, RHD4CZ8L04PT3203 |
|  | 6685 | **RHD4-02-002-L04-(IRR)-Wash out Chamber** |  | 2027-02-20 | 2027-03-01 |  |
| RHD4CZ8L04IRR2101 |  | Excavation and Bedding for Wash out Chamber for Irrigation Network - (RD-L-04)-Z8-L04-IRR | 2d | 2027-02-20 | 2027-02-21 | RHD4CZ8L04IRR1300, RHD4CZ9L06PT1500, RHD4CZ2C082SL1500, RHD4CZ9L06PT3200 |
| RHD4CZ8L04IRR2201 |  | PC works for Wash out Chamber for Irrigation Network - (RD-L-04)-Z8-L04-IRR | 2d | 2027-02-23 | 2027-02-24 | RHD4CZ8L04IRR2101 |
| RHD4CZ8L04IRR2301 |  | Installation for Wash out Chamber for Irrigation Network - (RD-L-04)-Z8-L04-IRR | 2d | 2027-02-25 | 2027-02-27 | RHD4CZ8L04IRR2201 |
| RHD4CZ8L04IRR2401 |  | Backfilling works for Wash out Chamber for Irrigation Network - (RD-L-04)-Z8-L04-IRR | 2d | 2027-02-28 | 2027-03-01 | RHD4CZ8L04IRR2301 |
|  | 6686 | **RHD4-02-002-L04-(IRR)-Wash out Valves** |  | 2027-02-28 | 2027-03-03 |  |
| RHD4CZ8L04IRR3102 |  | Installation for Wash out Valve for Irrigation Network - (RD-L-04)-Z8-L04-IRR | 2d | 2027-02-28 | 2027-03-01 | RHD4CZ8L04IRR2301 |
| RHD4CZ8L04IRR3202 |  | Stem and Service box for Wash out Valve for Irrigation Network - (RD-L-04)-Z8-L04-IRR | 2d | 2027-03-02 | 2027-03-03 | RHD4CZ8L04IRR3102, RHD4CZ8L04IRR2401, RHD4CZ8L04IRR5100, RHD4CZ7L131IRR3203 |
|  | 1769 | **RHD4-02-002-L04-(IRR)-Air Valve Chamber** |  | 2027-02-23 | 2027-03-03 |  |
| RHD4CZ8L04IRR2102 |  | Excavation and Bedding for Valve Chamber for Irrigation Network - (RD-L-04)-Z8-L04-IRR | 2d | 2027-02-23 | 2027-02-24 | RHD4CZ8L04IRR2101 |
| RHD4CZ8L04IRR2202 |  | PC works for Valve Chamber for Irrigation Network - (RD-L-04)-Z8-L04-IRR | 2d | 2027-02-25 | 2027-02-27 | RHD4CZ8L04IRR2102 |
| RHD4CZ8L04IRR2302 |  | Installation for Valve Chamber for Irrigation Network - (RD-L-04)-Z8-L04-IRR | 2d | 2027-02-28 | 2027-03-01 | RHD4CZ8L04IRR2202, RHD4CZ9C071SW3500 |
| RHD4CZ8L04IRR2402 |  | Backfilling works for Valve Chamber for Irrigation Network - (RD-L-04)-Z8-L04-IRR | 2d | 2027-03-02 | 2027-03-03 | RHD4CZ8L04IRR2302 |
|  | 1771 | **RHD4-02-002-L04-(IRR)-Concrete Encasement** |  | 2027-02-20 | 2027-02-21 |  |
| RHD4CZ8L04IRR5100 |  | Pipe Encasement for Irrigation Pipelines - (RD-L-04)-Z8-L04-IRR | 2d | 2027-02-20 | 2027-02-21 | RHD4CZ8L04IRR1300, RHD4CZ8L04IRR1503 |
|  | 3651 | **RHD4-02-002-L04-(IRR)-HDPE Pipes - 250 mm diameter** |  | 2027-01-20 | 2027-01-31 |  |
| RHD4CZ8L04IRR1103 |  | Excavation works for HDPE Pipline 250 mm - (RD-L-04)-Z8-L04-IRR | 2d | 2027-01-20 | 2027-01-21 | RHD4CZ8L04PT1500 |
| RHD4CZ8L04IRR1203 |  | Bedding works for HDPE Pipline 250 mm - (RD-L-04)-Z8-L04-IRR | 2d | 2027-01-23 | 2027-01-24 | RHD4CZ8L04IRR1103 |
| RHD4CZ8L04IRR1303 |  | Installing for HDPE Pipline 250 mm - (RD-L-04)-Z8-L04-IRR | 2d | 2027-01-25 | 2027-01-26 | RHD4CZ8L04IRR1203 |
| RHD4CZ8L04IRR1403 |  | Primary Test for HDPE Pipline 250 mm - (RD-L-04)-Z8-L04-IRR | 2d | 2027-01-27 | 2027-01-28 | RHD4CZ8L04IRR1303 |
| RHD4CZ8L04IRR1503 |  | Backfilling and warning tape works for HDPE Pipline 250 mm - (RD-L-04)-Z8-L04-IRR | 2d | 2027-01-30 | 2027-01-31 | RHD4CZ8L04IRR1403 |
|  | 7464 | **RHD4-02-002-Z8-L04-Medium Voltage Network - MV** |  | 2027-01-28 | 2027-02-09 |  |
|  | 7465 | **RHD4-02-002-L04-(MV)-Medium Voltage cable trench** |  | 2027-01-28 | 2027-02-09 |  |
| RHD4CZ8L04MV1100 |  | Excavation for Medium Voltage Trench - (RD-L-04)-Z8-L04-MV | 2d | 2027-01-28 | 2027-01-30 | RHD4ENSDZ8APPMV150, RHD4CZ8L04RD3100, RHD4CZ8RA04MV3400 |
| RHD4CZ8L04MV1200 |  | Trench Backfilling for Medium Voltage Network - (RD-L-04)-Z8-L04-MV | 2d | 2027-02-08 | 2027-02-09 | RHD4CZ8L04MV3300 |
|  | 7466 | **RHD4-02-002-L04-(MV)-Medium Voltage duct banks** |  |  |  |  |
|  | 7467 | **RHD4-02-002-L04-(MV)-Medium Voltage cables 3Cx 500 mm²** |  | 2027-01-31 | 2027-02-07 |  |
| RHD4CZ8L04MV3100 |  | Installation of Medium Voltage Cables 3Cx 500 mm² - (RD-L-04)-Z8-L04-MV | 3d | 2027-01-31 | 2027-02-02 | RHD4PRSHLDOSMV1100, RHD4ENMSMV2000, RHD4ENMSMV2010, RHD4PRSHLSTAGMV1100, RHD4CZ8L04MV1100 |
| RHD4CZ8L04MV3200 |  | Joints Installation of Medium Voltage Cables 3Cx 500 mm² - (RD-L-04)-Z8-L04-MV | 2d | 2027-02-03 | 2027-02-04 | RHD4PRSHLDOSMV1300, RHD4PRSHLSTAGMV1300, RHD4CZ8L04MV3100 |
| RHD4CZ8L04MV3300 |  | Testing of Medium Voltage Cables 3Cx 500 mm² - (RD-L-04)-Z8-L04-MV | 2d | 2027-02-06 | 2027-02-07 | RHD4CZ8L04MV3200 |
|  | 7471 | **RHD4-02-002-Z8-L04-Low Voltage Network - LV** |  | 2027-03-06 | 2027-03-17 |  |
|  | 7472 | **RHD4-02-002-L04-(LV)-Low Voltage duct banks** |  | 2027-03-06 | 2027-03-17 |  |
| RHD4CZ8L04LV2100 |  | Excavation of Duct Banks for Low Voltage Network - (RD-L-04)-Z8-L04-LV | 2d | 2027-03-06 | 2027-03-07 | RHD4ENSDZ8APPLV160, RHD4CZ8L04RW3000, RHD4CZ8L04IRR1500 |
| RHD4CZ8L04LV2200 |  | Installation of Duct Banks for Low Voltage Network - (RD-L-04)-Z8-L04-LV | 2d | 2027-03-08 | 2027-03-13 | RHD4PRSHLDOSLV1000, RHD4PRSHLSTAGLV1000, RHD4CZ8L04LV2100 |
| RHD4CZ8L04LV2300 |  | Pouring of Duct Banks for Low Voltage Network - (RD-L-04)-Z8-L04-LV | 2d | 2027-03-14 | 2027-03-15 | RHD4CZ8L04LV2200 |
| RHD4CZ8L04LV2400 |  | Backfilling of Duct Banks for Low Voltage Network - (RD-L-04)-Z8-L04-LV | 2d | 2027-03-16 | 2027-03-17 | RHD4CZ8L04LV2300 |
|  | 7477 | **RHD4-02-002-Z8-L04-Street Lighting Network - SL** |  | 2027-02-10 | 2027-05-27 |  |
|  | 7478 | **RHD4-02-002-L04-(SL)-Street Lighting duct banks** |  | 2027-03-08 | 2027-03-24 |  |
| RHD4CZ8L04SL2100 |  | Excavation of Duct Banks for Street Lighting Network - (RD-L-04)-Z8-L04-SL | 3d | 2027-03-08 | 2027-03-14 | RHD4ENSDZ8APPSL170, RHD4CZ8L04LV2100 |
| RHD4CZ8L04SL2200 |  | Installation of Duct Banks for Street Lighting Network - (RD-L-04)-Z8-L04-SL | 4d | 2027-03-15 | 2027-03-18 | RHD4PRSHLDOSSL1000, RHD4PRSHLSTAGSL1000, RHD4CZ8L04SL2100, RHD4CZ8L04LV2200 |
| RHD4CZ8L04SL2300 |  | Pouring of Duct Banks for Street Lighting Network - (RD-L-04)-Z8-L04-SL | 3d | 2027-03-20 | 2027-03-22 | RHD4CZ8L04SL2200, RHD4CZ8L04LV2300 |
| RHD4CZ8L04SL2400 |  | Backfilling of Duct Banks for Street Lighting Network - (RD-L-04)-Z8-L04-SL | 2d | 2027-03-23 | 2027-03-24 | RHD4CZ8L04SL2300 |
|  | 7479 | **RHD4-02-002-L04-(SL)-Street Lighting Drawpit** |  | 2027-02-10 | 2027-02-14 |  |
| RHD4CZ8L04SL5100 |  | Excavation of Drawpit size 600x600x900mm for Street Lighting Network - (RD-L-04)-Z8-L04-SL | 2d | 2027-02-10 | 2027-02-11 | RHD4ENSDZ8APPSL170, RHD4CZ8L04MV1200 |
| RHD4CZ8L04SL5200 |  | Installation of Drawpit size 600x600x900mm for Street Lighting Network - (RD-L-04)-Z8-L04-SL | 2d | 2027-02-13 | 2027-02-14 | RHD4PRSHLDOSSL1400, RHD4PRSHLSTAGSL1400, RHD4CZ8L04SL5100 |
|  | 7480 | **RHD4-02-002-L04-(SL)-Street Lighting cables** |  | 2027-02-15 | 2027-04-08 |  |
| RHD4CZ8L04SL3100 |  | Excavation for Street Lighting Cables for Street Lighting Network - (RD-L-04)-Z8-L04-SL | 13d | 2027-02-15 | 2027-03-02 | RHD4ENSDZ8APPSL170, RHD4CZ8L04SL5200 |
| RHD4CZ8L04SL3200 |  | Cable Laying of Street Lighting Cables for Street Lighting Network - (RD-L-04)-Z8-L04-SL | 11d | 2027-03-03 | 2027-03-18 | RHD4PRSHLDOSSL1100, RHD4ENMSSL2000, RHD4ENMSSL2010, RHD4PRSHLSTAGSL1100, RHD4CZ8L04SL3100 |
| RHD4CZ8L04SL3300 |  | Warning tape and Backfill for Street Lighting Cables for Street Lighting Network - (RD-L-04)-Z8-L04-SL | 11d | 2027-03-20 | 2027-03-31 | RHD4CZ8L04SL3200 |
| RHD4CZ8L04SL3400 |  | Testing of Street Lighting Cables for Street Lighting Network - (RD-L-04)-Z8-L04-SL | 7d | 2027-04-01 | 2027-04-08 | RHD4CZ8L04SL3300 |
|  | 7481 | **RHD4-02-002-L04-(SL)-Street Lighting Poles** |  | 2027-04-10 | 2027-05-27 |  |
| RHD4CZ8L04SL1100 |  | Excavation for RC Base for Lighting Poles for Street Lighting Network - (RD-L-04)-Z8-L04-SL | 7d | 2027-04-10 | 2027-04-17 | RHD4ENSDZ8APPSL170, RHD4CZ8L04SL3400 |
| RHD4CZ8L04SL1200 |  | Installation for RC Base for Lighting Poles for Street Lighting Network - (RD-L-04)-Z8-L04-SL | 7d | 2027-04-18 | 2027-04-25 | RHD4CZ8L04SL1100 |
| RHD4CZ8L04SL1300 |  | Backfill for RC Base for Lighting Poles for Street Lighting Network - (RD-L-04)-Z8-L04-SL | 7d | 2027-04-26 | 2027-05-03 | RHD4CZ8L04SL1200 |
| RHD4CZ8L04SL1400 |  | Installation for Lighting Poles for Street Lighting Network - (RD-L-04)-Z8-L04-SL | 10d | 2027-05-04 | 2027-05-19 | RHD4PRSHLDOSSL1200, RHD4ENMSSL2000, RHD4ENMSSL2010, RHD4PRSHLSTAGSL1200, RHD4CZ8L04SL1300 |

| ID | WBS | Task | Duration | Start | Finish | Predecessors |
| --- | --- | --- | --- | --- | --- | --- |
| RHD4CZ8L04SL1500 |  | Luminaire Installation for Lighting Poles for Street Lighting Network - (RD-L-04)-Z8-L04-SL | 7d | 2027-05-20 | 2027-05-27 | RHD4PRSHLDOSSL1300, RHD4PRSHLSTAGSL1300, RHD4CZ8L04SL1400 |
|  | 7483 | **RHD4-02-002-L04-(SL)-Street Lighting Earthing System** |  | 2027-05-20 | 2027-05-22 |  |
| RHD4CZ8L04SL6100 |  | Installation of Earthing for Lighting Poles and Fedder Pillers for Street Lighting Network - (RD-L-04)-Z8-L04-SL | 2d | 2027-05-20 | 2027-05-22 | RHD4ENMSER2000, RHD4ENMSER2010, RHD4CZ8L04SL1400 |
|  | 7489 | **RHD4-02-002-Z8-L04-Telecommunications Network - TC** |  | 2027-01-23 | 2027-04-03 |  |
|  | 7490 | **RHD4-02-002-L04-(TC)-Telecommunications Ducts** |  | 2027-01-23 | 2027-03-24 |  |
| RHD4CZ8L04TC2100 |  | Excavation of HDPE Ducts for Telecom Network - (RD-L-04)-Z8-L04-TC | 14d | 2027-01-23 | 2027-02-07 | RHD4ENSDZ8APPTC190, RHD4CZ8L04IRR1103 |
| RHD4CZ8L04TC2200 |  | Installation of HDPE Ducts for Telecom Network - (RD-L-04)-Z8-L04-TC | 21d | 2027-02-08 | 2027-03-04 | RHD4PRSHLDOSTC1000, RHD4PRSHLSTAGTC1000, RHD4CZ8L04TC2100 |
| RHD4CZ8L04TC2400 |  | Backfilling of HDPE Ducts for Telecom Network - (RD-L-04)-Z8-L04-TC | 14d | 2027-03-06 | 2027-03-24 | RHD4CZ8L04TC2200 |
|  | 7491 | **RHD4-02-002-L04-(TC)-Telecommunications Manholes** |  | 2027-03-25 | 2027-04-03 |  |
| RHD4CZ8L04TC5100 |  | Excavation for Manholes for Telecom Network - (RD-L-04)-Z8-L04-TC | 4d | 2027-03-25 | 2027-03-29 | RHD4ENSDZ8APPTC190, RHD4CZ8L04TC2100, RHD4CZ8L04TC2400 |
| RHD4CZ8L04TC5200 |  | Installation of Manholes for Telecom Network - (RD-L-04)-Z8-L04-TC | 4d | 2027-03-30 | 2027-04-03 | RHD4PRSHLDOSTC1200, RHD4PRSHLSTAGTC1200, RHD4CZ8L04TC5100, RHD4CZ8L04LV2400 |
|  | 7492 | **RHD4-02-002-L04-(TC)-Telecomminications Road Crossings** |  |  |  |  |
|  | 7493 | **RHD4-02-002-Z8-L04-Information and Communication Technologies - ICT** |  | 2026-08-20 | 2027-06-08 |  |
|  | 7494 | **RHD4-02-002-L04-(ICT)-Information and Communication Technologies Ducts** |  | 2027-04-04 | 2027-05-30 |  |
| RHD4CZ8L04ICT2100 |  | Excavation of HDPE Ducts for ICT Network - (RD-L-04)-Z8-L04-ICT | 18d | 2027-04-04 | 2027-04-24 | RHD4ENSDZ8APPICT200, RHD4CZ8L04TC2100, RHD4CZ8L04TC5200 |
| RHD4CZ8L04ICT2200 |  | Installation of HDPE Ducts for ICT Network - (RD-L-04)-Z8-L04-ICT | 9d | 2027-04-25 | 2027-05-04 | RHD4PRSHLDOSICT1000, RHD4PRSHLSTAGICT1000, RHD4CZ8L04ICT2100 |
| RHD4CZ8L04ICT2400 |  | Backfilling of HDPE Ducts for ICT Network - (RD-L-04)-Z8-L04-ICT | 18d | 2027-05-05 | 2027-05-30 | RHD4CZ8L04ICT2200 |
|  | 7495 | **RHD4-02-002-L04-(ICT)-Information and Communication Technologies Manholes** |  | 2027-05-31 | 2027-06-08 |  |
| RHD4CZ8L04ICT5100 |  | Excavation for Manholes for ICT Network - (RD-L-04)-Z8-L04-ICT | 4d | 2027-05-31 | 2027-06-03 | RHD4ENSDZ8APPICT200, RHD4CZ8L04ICT2400 |
| RHD4CZ8L04ICT5200 |  | Installation of Manholes for ICT Network - (RD-L-04)-Z8-L04-ICT | 4d | 2027-06-05 | 2027-06-08 | RHD4PRSHLDOSICT1200, RHD4PRSHLSTAGICT1200, RHD4CZ8L04ICT5100, RHD4CZ8RA04CCTV6100 |
|  | 7496 | **RHD4-02-002-L04-(ICT)-Information and Communication Technologies Road Crossings** |  | 2026-08-20 | 2026-08-29 |  |
| RHD4CZ8L04ICT3100 |  | Excavation for Road Crossings for ICT Network - (RD-L-04)-Z8-L04-ICT | 2d | 2026-08-20 | 2026-08-22 | RHD4ENSDZ8APPICT200, RHD4CZ8RA04TC3100 SS |
| RHD4CZ8L04ICT3200 |  | Installation of Road Crossings for ICT Network - (RD-L-04)-Z8-L04-ICT | 2d | 2026-08-23 | 2026-08-24 | RHD4PRSHLDOSICT1100, RHD4PRSHLSTAGICT1100, RHD4CZ8L04ICT3100 |
| RHD4CZ8L04ICT3300 |  | Pouring of Road Crossings for ICT Network - (RD-L-04)-Z8-L04-ICT | 2d | 2026-08-25 | 2026-08-26 | RHD4CZ8L04ICT3200 |
| RHD4CZ8L04ICT3400 |  | Backfilling of Road Crossings for ICT Network - (RD-L-04)-Z8-L04-ICT | 2d | 2026-08-27 | 2026-08-29 | RHD4CZ8L04ICT3300 |
|  | 7484 | **RHD4-02-002-Z8-L04-Landscape Network - LS** |  |  |  |  |
|  | 7485 | **RHD4-02-002-L04-(LS)-Landscape Lighting cables** |  |  |  |  |
|  | 7486 | **RHD4-02-002-L04-(LS)-Landscape Feeder Pillars** |  |  |  |  |
|  | 7487 | **RHD4-02-002-L04-(LS)-Landscape Bollard Poles** |  |  |  |  |
|  | 7488 | **RHD4-02-002-L04-(LS)-Landscape Feeder Pillars Earthing** |  |  |  |  |
|  | 7497 | **RHD4-02-002-Z8-L04-Security Network - CCTV** |  | 2027-06-09 | 2027-07-08 |  |
|  | 7498 | **RHD4-02-002-L04-(CCTV)-Civil Works** |  | 2027-06-09 | 2027-06-14 |  |
| RHD4CZ8L04CCTV2100 |  | Civil Works for Security Network - (RD-L-04)-Z8-L04-CCTV | 5d | 2027-06-09 | 2027-06-14 | RHD4CZ8L04ICT5200, RHD4CZ8L04SL6100 |
|  | 7499 | **RHD4-02-002-L04-(CCTV)-CCTV Poles** |  | 2027-06-15 | 2027-06-26 |  |
| RHD4CZ8L04CCTV1100 |  | Excavation for RC Base for CCTV Poles for Security Network - (RD-L-04)-Z8-L04-CCTV | 2d | 2027-06-15 | 2027-06-16 | RHD4ENSDZ8APPCCTV210, RHD4CZ8L04CCTV2100 |
| RHD4CZ8L04CCTV1200 |  | Installation for RC Base for CCTV Poles for Security Network - (RD-L-04)-Z8-L04-CCTV | 2d | 2027-06-17 | 2027-06-19 | RHD4CZ8L04CCTV1100 |
| RHD4CZ8L04CCTV1300 |  | Backfill for RC Base for CCTV Poles for Security Network - (RD-L-04)-Z8-L04-CCTV | 2d | 2027-06-20 | 2027-06-21 | RHD4CZ8L04CCTV1200 |
| RHD4CZ8L04CCTV1400 |  | Installation for CCTV Poles for Security Network - (RD-L-04)-Z8-L04-CCTV | 2d | 2027-06-22 | 2027-06-23 | RHD4PRSHLDOSCCTV1000, RHD4PRSHLSTACCTV1000, RHD4CZ8L04CCTV1300 |
| RHD4CZ8L04CCTV1500 |  | Protection post Installation for CCTV Poles for Security Network - (RD-L-04)-Z8-L04-CCTV | 2d | 2027-06-24 | 2027-06-26 | RHD4CZ8L04CCTV1400 |
|  | 7500 | **RHD4-02-002-L04-(CCTV)-Camera** |  | 2027-06-27 | 2027-06-28 |  |
| RHD4CZ8L04CCTV3100 |  | Installation for Cameras for Security Network - (RD-L-04)-Z8-L04-CCTV | 2d | 2027-06-27 | 2027-06-28 | RHD4PRSHLDOSCCTV1100, RHD4PRSHLSTACCTV1100, RHD4CZ8L04CCTV1400, RHD4CZ8L04CCTV4100 |
|  | 7501 | **RHD4-02-002-L04-(CCTV)-Power and Infrastructure** |  | 2027-06-24 | 2027-06-26 |  |
| RHD4CZ8L04CCTV4100 |  | Installation of Power outlet, UPS and midspan for PTZ Camerafor Cameras for Security Network - (RD-L-04)-Z8-L04-CCTV | 2d | 2027-06-24 | 2027-06-26 | RHD4PRSHLDOSCCTV1300, RHD4PRSHLSTACCTV1300, RHD4CZ8L04CCTV1400 |
|  | 7503 | **RHD4-02-002-L04-(CCTV)-CCTV Panels and Components** |  | 2027-06-29 | 2027-07-08 |  |
| RHD4CZ8L04CCTV6100 |  | Installation for CCTV Panels for Security Network - (RD-L-04)-Z8-L04-CCTV | 9d | 2027-06-29 | 2027-07-08 | RHD4PRSHLDOSCCTV1200, RHD4PRSHLSTACCTV1200, RHD4PRLOLSTACCTV1001, RHD4CZ8L04CCTV3100 |
|  | 7514 | **RHD4-02-002-Z8-C014** |  | 2026-08-30 | 2027-08-18 |  |
|  | 7693 | **RHD4-02-002-Z8-C014-Road Works - RD** |  | 2026-08-30 | 2027-08-18 |  |
|  | 7696 | **RHD4-02-002-C014-(RD)-Bituminous base course Two Layers, including (MC1)&(RC2)** |  | 2026-09-09 | 2027-08-03 |  |
| RHD4CZ8C014RD3100 |  | Supply, lay and Asphaltic base course including Prime Coat (MC1) for 1st Layer - (RD-C-1/4)-Z8-C014-RD | 3d | 2026-09-09 | 2026-09-12 | RHD4PRSHLDOSRD1100, RHD4ENMSASPH2000, RHD4ENMSASPH2010, RHD4PRSHLSTAGRD1100, RHD4CZ8C014RD2100, RHD4CZ8A011RD2100 |
| RHD4CZ8C014RD3200 |  | Supply, lay and Asphaltic base course including Tack Coat (RC2) for 2nd Layer - (RD-C-1/4)-Z8-C014-RD | 4d | 2027-07-31 | 2027-08-03 | RHD4PRSHLDOSRD1100, RHD4PRSHLSTAGRD1100, RHD4CZ8C014ICT5200 |
|  | 7698 | **RHD4-02-002-C014-(RD)-Precast Concrete Curb** |  | 2027-08-04 | 2027-08-09 |  |
| RHD4CZ8C014RD5100 |  | Supply and installation Precast Concrete Kerb for Roads - (RD-C-1/4)-Z8-C014-RD | 5d | 2027-08-04 | 2027-08-09 | RHD4PRSHLDOSRD1200, RHD4ENMSRD2000, RHD4ENMSRD2010, RHD4PRSHLSTAGRD1200, RHD4CZ8C014RD3200, RHD4CZ8L04RD5100 |
|  | 7694 | **RHD4-02-002-C014-(RD)-Subgrade** |  | 2026-08-30 | 2026-09-02 |  |
| RHD4CZ8C014RD1100 |  | Supply, lay and compaction subgrade compacted thickness 300 mm for Roads - (RD-C-1/4)-Z8-C014-RD | 4d | 2026-08-30 | 2026-09-02 | RHD4ENSDZ8APPEW100, RHD4ENSDZ8APPRD220, RHD4CZ8L04RD1100 SS |
|  | 7695 | **RHD4-02-002-C014-(RD)-Aggregate Base Course** |  | 2026-09-03 | 2026-09-08 |  |
| RHD4CZ8C014RD2100 |  | Supply, lay and compaction Aggregate base course compacted thickness 300 mmfor Roads - (RD-C-1/4)-Z8-C014-RD | 5d | 2026-09-03 | 2026-09-08 | RHD4PRSHLDOSRD1000, RHD4PRSHLSTAGRD1000, RHD4CZ8C014RD1100 |
|  | 7701 | **RHD4-02-002-C014-(RD)-Traffic Signage** |  | 2027-08-10 | 2027-08-18 |  |
| RHD4CZ8C014RD8100 |  | Installation of Traffic Signage for Road Network - (RD-C-1/4)-Z8-C014-RD | 8d | 2027-08-10 | 2027-08-18 | RHD4PRSHLDOSRD1600, RHD4PRSHLSTAGRD1600, RHD4CZ8C014RD5100, RHD4CZ8L04IRR3203 |
|  | 7699 | **RHD4-02-002-C014-(RD)-Precast Interlocking Block Pavers** |  |  |  |  |
|  | 7697 | **RHD4-02-002-C014-(RD)-Bituminous concrete wearing course including tack coat (RC2)** |  | 2027-08-10 | 2027-08-11 |  |
| RHD4CZ8C014RD4100 |  | Supply, lay and compaction Asphaltic wearing course including tack Coat (RC2)for Road Network - (RD-C-1/4)-Z8-C014-RD | 2d | 2027-08-10 | 2027-08-11 | RHD4CZ8C014RD5100 |
|  | 7700 | **RHD4-02-002-C014-(RD)-Pavement Marking** |  | 2027-08-12 | 2027-08-16 |  |
| RHD4CZ8C014RD7100 |  | Pavement Markings for Road Network - (RD-C-1/4)-Z8-C014-RD | 4d | 2027-08-12 | 2027-08-16 | RHD4PRSHLDOSRD1500, RHD4PRSHLSTAGRD1500, RHD4CZ8C014RD4100, RHD4CZ8L04RD7100 |
|  | 7240 | **RHD4-02-002-Z8-C014-Irrigation Network - IRR** |  | 2027-01-28 | 2027-02-21 |  |
|  | 8188 | **RHD4-02-002-C014-(IRR)-HDPE Pipes - 180 mm diameter** |  | 2027-01-28 | 2027-02-20 |  |
| RHD4CZ8C014IRR1101 |  | Excavation works for HDPE Pipline 180 mm - (RD-C-1/4)-Z8-C014-IRR | 5d | 2027-01-28 | 2027-02-02 | RHD4CZ8C014RW3000, RHD4CZ8A011IRR1100 |
| RHD4CZ8C014IRR1201 |  | Bedding works for HDPE Pipline 180 mm - (RD-C-1/4)-Z8-C014-IRR | 4d | 2027-02-03 | 2027-02-07 | RHD4CZ8C014IRR1101 |
| RHD4CZ8C014IRR1301 |  | Installing for HDPE Pipline 180 mm - (RD-C-1/4)-Z8-C014-IRR | 5d | 2027-02-08 | 2027-02-13 | RHD4CZ8C014IRR1201 |
| RHD4CZ8C014IRR1401 |  | Primary Test for HDPE Pipline 180 mm - (RD-C-1/4)-Z8-C014-IRR | 2d | 2027-02-14 | 2027-02-15 | RHD4CZ8C014IRR1301 |
| RHD4CZ8C014IRR1501 |  | Backfilling and warning tape works for HDPE Pipline 180 mm - (RD-C-1/4)-Z8-C014-IRR | 4d | 2027-02-16 | 2027-02-20 | RHD4CZ8C014IRR1401 |

| ID | WBS | Task | Duration | Start | Finish | Predecessors |
| --- | --- | --- | --- | --- | --- | --- |
|  | 6685 | **RHD4-02-002-C014-(IRR)-Wash out Chamber** |  | 2027-02-10 | 2027-02-18 |  |
| RHD4CZ8C014IRR2101 |  | Excavation and Bedding for Wash out Chamber for Irrigation Network - (RD-C-1/4)-Z8-C014-IRR | 2d | 2027-02-10 | 2027-02-11 | RHD4CZ8C014IRR1300 |
| RHD4CZ8C014IRR2201 |  | PC works for Wash out Chamber for Irrigation Network - (RD-C-1/4)-Z8-C014-IRR | 2d | 2027-02-13 | 2027-02-14 | RHD4CZ8C014IRR2101 |
| RHD4CZ8C014IRR2301 |  | Installation for Wash out Chamber for Irrigation Network - (RD-C-1/4)-Z8-C014-IRR | 2d | 2027-02-15 | 2027-02-16 | RHD4CZ8C014IRR2201 |
| RHD4CZ8C014IRR2401 |  | Backfilling works for Wash out Chamber for Irrigation Network - (RD-C-1/4)-Z8-C014-IRR | 2d | 2027-02-17 | 2027-02-18 | RHD4CZ8C014IRR2301 |
|  | 6686 | **RHD4-02-002-C014-(IRR)-Wash out Valves** |  | 2027-02-17 | 2027-02-21 |  |
| RHD4CZ8C014IRR3102 |  | Installation for Wash out Valve for Irrigation Network - (RD-C-1/4)-Z8-C014-IRR | 2d | 2027-02-17 | 2027-02-18 | RHD4CZ8C014IRR2301 |
| RHD4CZ8C014IRR3202 |  | Stem and Service box for Wash out Valve for Irrigation Network - (RD-C-1/4)-Z8-C014-IRR | 2d | 2027-02-20 | 2027-02-21 | RHD4CZ8C014IRR3102, RHD4CZ8C014IRR2401 |
|  | 6107 | **RHD4-02-002-C014-(IRR)-HDPE Pipes - 160 mm diameter** |  | 2027-02-03 | 2027-02-14 |  |
| RHD4CZ8C014IRR1100 |  | Excavation works for HDPE Pipline 160 mm - (RD-C-1/4)-Z8-C014-IRR | 2d | 2027-02-03 | 2027-02-04 | RHD4CZ8C014IRR1101 |
| RHD4CZ8C014IRR1200 |  | Bedding works for HDPE Pipline 160 mm - (RD-C-1/4)-Z8-C014-IRR | 2d | 2027-02-06 | 2027-02-07 | RHD4CZ8C014IRR1100 |
| RHD4CZ8C014IRR1300 |  | Installing for HDPE Pipline 160 mm - (RD-C-1/4)-Z8-C014-IRR | 2d | 2027-02-08 | 2027-02-09 | RHD4CZ8C014IRR1200 |
| RHD4CZ8C014IRR1400 |  | Primary Test for HDPE Pipline 160 mm - (RD-C-1/4)-Z8-C014-IRR | 2d | 2027-02-10 | 2027-02-11 | RHD4CZ8C014IRR1300 |
| RHD4CZ8C014IRR1500 |  | Backfilling and warning tape works for HDPE Pipline 160 mm - (RD-C-1/4)-Z8-C014-IRR | 2d | 2027-02-13 | 2027-02-14 | RHD4CZ8C014IRR1400 |
|  | 6115 | **RHD4-02-002-C014-(IRR)-Gate Valves (Direct Buried)** |  | 2027-02-08 | 2027-02-16 |  |
| RHD4CZ8C014IRR3100 |  | Installation for Direct Buried Gate Valves - (RD-C-1/4)-Z8-C014-IRR | 2d | 2027-02-08 | 2027-02-09 | RHD4CZ8C014IRR1300 SS, RHD4CZ8C014IRR1300 FF |
| RHD4CZ8C014IRR3200 |  | Stem and Service box for Direct Buried Gate Valves - (RD-C-1/4)-Z8-C014-IRR | 2d | 2027-02-15 | 2027-02-16 | RHD4CZ8C014IRR3100, RHD4CZ8C014IRR1500 |
|  | 7653 | **RHD4-02-002-Z8-C014-Medium Voltage Network - MV** |  | 2027-01-31 | 2027-02-27 |  |
|  | 7654 | **RHD4-02-002-C014-(MV)-Medium Voltage cable trench** |  | 2027-01-31 | 2027-02-08 |  |
| RHD4CZ8C014MV1100 |  | Excavation for Medium Voltage Trench - (RD-C-1/4)-Z8-C014-MV | 3d | 2027-01-31 | 2027-02-02 | RHD4ENSDZ8APPMV150, RHD4CZ8C014RD3100, RHD4CZ8L04MV1100 |
| RHD4CZ8C014MV1200 |  | Trench Backfilling for Medium Voltage Network - (RD-C-1/4)-Z8-C014-MV | 3d | 2027-02-06 | 2027-02-08 | RHD4CZ8C014MV3101 |
|  | 7656 | **RHD4-02-002-C014-(MV)-Medium Voltage cables 3Cx 500 mm²** |  | 2027-02-03 | 2027-02-27 |  |
| RHD4CZ8C014MV3100 |  | Installation of Medium Voltage Cables 3Cx 500 mm² - (RD-C-1/4)-Z8-C014-MV | 6d | 2027-02-03 | 2027-02-09 | RHD4PRSHLDOSMV1100, RHD4ENMSMV2000, RHD4ENMSMV2010, RHD4PRSHLSTAGMV1100, RHD4CZ8C014MV1100 |
| RHD4CZ8C014MV3200 |  | Joints Installation of Medium Voltage Cables 3Cx 500 mm² - (RD-C-1/4)-Z8-C014-MV | 2d | 2027-02-10 | 2027-02-11 | RHD4PRSHLDOSMV1300, RHD4PRSHLSTAGMV1300, RHD4CZ8C014MV3100 |
| RHD4CZ8C014MV3300 |  | Testing of Medium Voltage Cables 3Cx 500 mm² - (RD-C-1/4)-Z8-C014-MV | 2d | 2027-02-13 | 2027-02-14 | RHD4CZ8C014MV3200, RHD4CZ8C014MV1200 |
| RHD4CZ8C014MV3400 |  | Termination of Medium Voltage Cables 3Cx 500 mm² - (RD-C-1/4)-Z8-C014-MV | 2d | 2027-02-25 | 2027-02-27 | RHD4CZ8C014MV3300, RHD4CZ8C014MV5400 |
|  | 7657 | **RHD4-02-002-C014-(MV)-Medium Voltage cables 3Cx 50 mm²** |  | 2027-02-03 | 2027-02-27 |  |
| RHD4CZ8C014MV3101 |  | Installation of Medium Voltage Cables 3Cx 50 mm² - (RD-C-1/4)-Z8-C014-MV | 2d | 2027-02-03 | 2027-02-04 | RHD4PRSHLDOSMV1200, RHD4ENMSMV2000, RHD4ENMSMV2010, RHD4PRSHLSTAGMV1200, RHD4CZ8C014MV1100 |
| RHD4CZ8C014MV3301 |  | Testing of Medium Voltage Cables 3Cx 50 mm² - (RD-C-1/4)-Z8-C014-MV | 2d | 2027-02-09 | 2027-02-10 | RHD4CZ8C014MV3101, RHD4CZ8C014MV1200 |
| RHD4CZ8C014MV3401 |  | Termination of Medium Voltage Cables 3Cx 50 mm² - (RD-C-1/4)-Z8-C014-MV | 2d | 2027-02-25 | 2027-02-27 | RHD4CZ8C014MV3301, RHD4CZ8C014MV5400 |
|  | 7659 | **RHD4-02-002-C014-(MV)-Unit Substations** |  | 2027-02-09 | 2027-02-24 |  |
| RHD4CZ8C014MV5100 |  | Excavation for Unit Substations for Medium Voltage Network - (RD-C-1/4)-Z8-C014-MV | 2d | 2027-02-09 | 2027-02-10 | RHD4ENSDZ8APPMV150, RHD4CZ8C014MV1200 |
| RHD4CZ8C014MV5200 |  | Concrete Base Placement for Unit Substations for Medium Voltage Network - (RD-C-1/4)-Z8-C014-MV | 2d | 2027-02-11 | 2027-02-13 | RHD4CZ8C014MV5100 |
| RHD4CZ8C014MV5300 |  | Installation for Fences and doors for Medium Voltage Network - (RD-C-1/4)-Z8-C014-MV | 5d | 2027-02-14 | 2027-02-18 | RHD4CZ8C014MV5200 |
| RHD4CZ8C014MV5400 |  | Installation for Unit Substations for Medium Voltage Network - (RD-C-1/4)-Z8-C014-MV | 4d | 2027-02-20 | 2027-02-24 | RHD4PRLOLSTAGMV1601, RHD4PRLOLSTAGMV1602, RHD4CZ8C014MV5300 |
|  | 7660 | **RHD4-02-002-Z8-C014-Low Voltage Network - LV** |  | 2027-02-28 | 2027-03-18 |  |
|  | 7663 | **RHD4-02-002-C014-(LV)-Low Voltage cables** |  | 2027-02-28 | 2027-03-08 |  |
| RHD4CZ8C014LV3100 |  | Excavation for Low Voltage Cables for Low Voltage Network - (RD-C-1/4)-Z8-C014-LV | 2d | 2027-02-28 | 2027-03-01 | RHD4ENSDZ8APPLV160, RHD4CZ8C014MV1200, RHD4CZ8C014MV3401, RHD4CZ8C014MV3400 |
| RHD4CZ8C014LV3200 |  | Cable Laying of Low Voltage Cables for Low Voltage Network - (RD-C-1/4)-Z8-C014-LV | 2d | 2027-03-02 | 2027-03-03 | RHD4PRSHLDOSLV1100, RHD4ENMSLV2000, RHD4ENMSLV2010, RHD4PRSHLSTAGLV1100, RHD4CZ8C014LV3100 |
| RHD4CZ8C014LV3300 |  | Warning tape and Backfill for Low Voltage Cables for Low Voltage Network - (RD-C-1/4)-Z8-C014-LV | 2d | 2027-03-04 | 2027-03-06 | RHD4CZ8C014LV3200 |
| RHD4CZ8C014LV3400 |  | Testing of Low Voltage Cables for Low Voltage Network - (RD-C-1/4)-Z8-C014-LV | 2d | 2027-03-07 | 2027-03-08 | RHD4CZ8C014LV3300 |
|  | 7664 | **RHD4-02-002-C014-(LV)-Low Voltage Distribution Pillars** |  | 2027-03-13 | 2027-03-18 |  |
| RHD4CZ8C014LV4100 |  | Leveling for Distribution Pillars for Low Voltage Network - (RD-C-1/4)-Z8-C014-LV | 2d | 2027-03-13 | 2027-03-14 | RHD4CZ8C014LV3400 |
| RHD4CZ8C014LV4200 |  | Lean Concrete for Distribution Pillars for Low Voltage Network - (RD-C-1/4)-Z8-C014-LV | 2d | 2027-03-15 | 2027-03-16 | RHD4CZ8C014LV4100 |
| RHD4CZ8C014LV4300 |  | Installation of Distribution Pillars for Low Voltage Network - (RD-C-1/4)-Z8-C014-LV | 2d | 2027-03-17 | 2027-03-18 | RHD4PRSHLDOSLV1200, RHD4PRSHLDOSLV1300, RHD4PRSHLSTAGLV1200, RHD4PRSHLSTAGLV1300, RHD4CZ8C014LV4200 |
|  | 7665 | **RHD4-02-002-C014-(LV)-Low Voltage Distribution Pillars Earthing** |  |  |  |  |
|  | 7666 | **RHD4-02-002-Z8-C014-Street Lighting Network - SL** |  | 2027-02-15 | 2027-05-09 |  |
|  | 7667 | **RHD4-02-002-C014-(SL)-Street Lighting duct banks** |  | 2027-02-15 | 2027-02-24 |  |
| RHD4CZ8C014SL2100 |  | Excavation of Duct Banks for Street Lighting Network - (RD-C-1/4)-Z8-C014-SL | 2d | 2027-02-15 | 2027-02-16 | RHD4ENSDZ8APPSL170, RHD4CZ8C014RW3000, RHD4CZ8C014IRR1100, RHD4CZ8C014IRR1500 |
| RHD4CZ8C014SL2200 |  | Installation of Duct Banks for Street Lighting Network - (RD-C-1/4)-Z8-C014-SL | 2d | 2027-02-17 | 2027-02-18 | RHD4PRSHLDOSSL1000, RHD4PRSHLSTAGSL1000, RHD4CZ8C014SL2100 |
| RHD4CZ8C014SL2300 |  | Pouring of Duct Banks for Street Lighting Network - (RD-C-1/4)-Z8-C014-SL | 2d | 2027-02-20 | 2027-02-21 | RHD4CZ8C014SL2200 |
| RHD4CZ8C014SL2400 |  | Backfilling of Duct Banks for Street Lighting Network - (RD-C-1/4)-Z8-C014-SL | 2d | 2027-02-23 | 2027-02-24 | RHD4CZ8C014SL2300 |
|  | 7668 | **RHD4-02-002-C014-(SL)-Street Lighting Drawpit** |  | 2027-03-20 | 2027-03-23 |  |
| RHD4CZ8C014SL5100 |  | Excavation of Drawpit size 600x600x900mm for Street Lighting Network - (RD-C-1/4)-Z8-C014-SL | 2d | 2027-03-20 | 2027-03-21 | RHD4ENSDZ8APPSL170, RHD4CZ8C014SL2300, RHD4CZ8C014LV4300 |
| RHD4CZ8C014SL5200 |  | Installation of Drawpit size 600x600x900mm for Street Lighting Network - (RD-C-1/4)-Z8-C014-SL | 2d | 2027-03-22 | 2027-03-23 | RHD4PRSHLDOSSL1400, RHD4PRSHLSTAGSL1400, RHD4CZ8C014SL5100 |
|  | 7669 | **RHD4-02-002-C014-(SL)-Street Lighting cables** |  | 2027-03-24 | 2027-04-08 |  |
| RHD4CZ8C014SL3100 |  | Excavation for Street Lighting Cables for Street Lighting Network - (RD-C-1/4)-Z8-C014-SL | 4d | 2027-03-24 | 2027-03-28 | RHD4ENSDZ8APPSL170, RHD4CZ8C014SL5200 |
| RHD4CZ8C014SL3200 |  | Cable Laying of Street Lighting Cables for Street Lighting Network - (RD-C-1/4)-Z8-C014-SL | 4d | 2027-03-29 | 2027-04-01 | RHD4PRSHLDOSSL1100, RHD4ENMSSL2000, RHD4ENMSSL2010, RHD4PRSHLSTAGSL1100, RHD4CZ8C014SL3100 |
| RHD4CZ8C014SL3300 |  | Warning tape and Backfill for Street Lighting Cables for Street Lighting Network - (RD-C-1/4)-Z8-C014-SL | 4d | 2027-04-03 | 2027-04-06 | RHD4CZ8C014SL3200 |
| RHD4CZ8C014SL3400 |  | Testing of Street Lighting Cables for Street Lighting Network - (RD-C-1/4)-Z8-C014-SL | 2d | 2027-04-07 | 2027-04-08 | RHD4CZ8C014SL3300 |
|  | 7670 | **RHD4-02-002-C014-(SL)-Street Lighting Poles** |  | 2027-04-10 | 2027-04-29 |  |
| RHD4CZ8C014SL1100 |  | Excavation for RC Base for Lighting Poles for Street Lighting Network - (RD-C-1/4)-Z8-C014-SL | 3d | 2027-04-10 | 2027-04-12 | RHD4ENSDZ8APPSL170, RHD4CZ8C014SL3400 |
| RHD4CZ8C014SL1200 |  | Installation for RC Base for Lighting Poles for Street Lighting Network - (RD-C-1/4)-Z8-C014-SL | 3d | 2027-04-13 | 2027-04-15 | RHD4CZ8C014SL1100 |
| RHD4CZ8C014SL1300 |  | Backfill for RC Base for Lighting Poles for Street Lighting Network - (RD-C-1/4)-Z8-C014-SL | 3d | 2027-04-17 | 2027-04-19 | RHD4CZ8C014SL1200 |
| RHD4CZ8C014SL1400 |  | Installation for Lighting Poles for Street Lighting Network - (RD-C-1/4)-Z8-C014-SL | 4d | 2027-04-20 | 2027-04-24 | RHD4PRSHLDOSSL1200, RHD4ENMSSL2000, RHD4ENMSSL2010, RHD4PRSHLSTAGSL1200, RHD4CZ8C014SL1300, RHD4CZ8C014SL3400 |
| RHD4CZ8C014SL1500 |  | Luminaire Installation for Lighting Poles for Street Lighting Network - (RD-C-1/4)-Z8-C014-SL | 5d | 2027-04-25 | 2027-04-29 | RHD4PRSHLDOSSL1300, RHD4PRSHLSTAGSL1300, RHD4CZ8C014SL1400 |
|  | 7671 | **RHD4-02-002-C014-(SL)-Street Lighting Feeder Pillars** |  | 2027-05-01 | 2027-05-06 |  |
| RHD4CZ8C014SL4100 |  | Leveling for Distribution Pillars for Street Lighting Network - (RD-C-1/4)-Z8-C014-SL | 2d | 2027-05-01 | 2027-05-02 | RHD4CZ8C014SL1500 |
| RHD4CZ8C014SL4200 |  | Lean Concrete for Distribution Pillars for Street Lighting Network - (RD-C-1/4)-Z8-C014-SL | 2d | 2027-05-03 | 2027-05-04 | RHD4CZ8C014SL4100 |
| RHD4CZ8C014SL4300 |  | Installation of Distribution Pillars for Street Lighting Network - (RD-C-1/4)-Z8-C014-SL | 2d | 2027-05-05 | 2027-05-06 | RHD4CZ8C014SL4200, RHD4CZ8C014SL1400 |

| ID | WBS | Task | Duration | Start | Finish | Predecessors |
| --- | --- | --- | --- | --- | --- | --- |
|  | 7672 | **RHD4-02-002-C014-(SL)-Street Lighting Earthing System** |  | 2027-05-08 | 2027-05-09 |  |
| RHD4CZ8C014SL6100 |  | Installation of Earthing for Lighting Poles and Fedder Pillers for Street Lighting Network - (RD-C-1/4)-Z8-C014-SL | 2d | 2027-05-08 | 2027-05-09 | RHD4ENMSER2000, RHD4ENMSER2010, RHD4CZ8C014SL4300 |
|  | 7678 | **RHD4-02-002-Z8-C014-Telecommunications Network - TC** |  | 2027-05-10 | 2027-06-12 |  |
|  | 7679 | **RHD4-02-002-C014-(TC)-Telecommunications Ducts** |  | 2027-05-10 | 2027-06-07 |  |
| RHD4CZ8C014TC2100 |  | Excavation of HDPE Ducts for Telecom Network - (RD-C-1/4)-Z8-C014-TC | 6d | 2027-05-10 | 2027-05-20 | RHD4ENSDZ8APPTC190, RHD4CZ8C014SL6100 |
| RHD4CZ8C014TC2200 |  | Installation of HDPE Ducts for Telecom Network - (RD-C-1/4)-Z8-C014-TC | 9d | 2027-05-22 | 2027-05-31 | RHD4PRSHLDOSTC1000, RHD4PRSHLSTAGTC1000, RHD4CZ8C014TC2100 |
| RHD4CZ8C014TC2400 |  | Backfilling of HDPE Ducts for Telecom Network - (RD-C-1/4)-Z8-C014-TC | 6d | 2027-06-01 | 2027-06-07 | RHD4CZ8C014TC2200, RHD4CZ4C012RD8100, RHD4CZ4L01CCTV6100 |
|  | 7680 | **RHD4-02-002-C014-(TC)-Telecommunications Manholes** |  | 2027-06-08 | 2027-06-12 |  |
| RHD4CZ8C014TC5100 |  | Excavation for Manholes for Telecom Network - (RD-C-1/4)-Z8-C014-TC | 2d | 2027-06-08 | 2027-06-09 | RHD4ENSDZ8APPTC190, RHD4CZ8C014TC2400 |
| RHD4CZ8C014TC5200 |  | Installation of Manholes for Telecom Network - (RD-C-1/4)-Z8-C014-TC | 2d | 2027-06-10 | 2027-06-12 | RHD4PRSHLDOSTC1200, RHD4PRSHLSTAGTC1200, RHD4CZ8C014TC5100 |
|  | 7682 | **RHD4-02-002-Z8-C014-Information and Communication Technologies - ICT** |  | 2027-06-13 | 2027-07-29 |  |
|  | 7683 | **RHD4-02-002-C014-(ICT)-Information and Communication Technologies Ducts** |  | 2027-06-13 | 2027-07-22 |  |
| RHD4CZ8C014ICT2100 |  | Excavation of HDPE Ducts for ICT Network - (RD-C-1/4)-Z8-C014-ICT | 10d | 2027-06-13 | 2027-06-23 | RHD4ENSDZ8APPICT200, RHD4CZ8C014IRR1100, RHD4CZ8C014TC5200 |
| RHD4CZ8C014ICT2200 |  | Installation of HDPE Ducts for ICT Network - (RD-C-1/4)-Z8-C014-ICT | 15d | 2027-06-24 | 2027-07-11 | RHD4PRSHLDOSICT1000, RHD4PRSHLSTAGICT1000, RHD4CZ8C014ICT2100 |
| RHD4CZ8C014ICT2400 |  | Backfilling of HDPE Ducts for ICT Network - (RD-C-1/4)-Z8-C014-ICT | 10d | 2027-07-12 | 2027-07-22 | RHD4CZ8C014ICT2200 |
|  | 7684 | **RHD4-02-002-C014-(ICT)-Information and Communication Technologies Manholes** |  | 2027-07-24 | 2027-07-29 |  |
| RHD4CZ8C014ICT5100 |  | Excavation for Manholes for ICT Network - (RD-C-1/4)-Z8-C014-ICT | 3d | 2027-07-24 | 2027-07-26 | RHD4ENSDZ8APPICT200, RHD4CZ8C014ICT2100, RHD4CZ8C014ICT2400 |
| RHD4CZ8C014ICT5200 |  | Installation of Manholes for ICT Network - (RD-C-1/4)-Z8-C014-ICT | 3d | 2027-07-27 | 2027-07-29 | RHD4PRSHLDOSICT1200, RHD4PRSHLSTAGICT1200, RHD4CZ8C014ICT5100 |
|  | 7673 | **RHD4-02-002-Z8-C014-Landscape Network - LS** |  |  |  |  |
|  | 7674 | **RHD4-02-002-C014-(LS)-Landscape Lighting cables** |  |  |  |  |
|  | 7676 | **RHD4-02-002-C014-(LS)-Landscape Bollard Poles** |  |  |  |  |
|  | 7686 | **RHD4-02-002-Z8-C014-Security Network - CCTV** |  |  |  |  |
|  | 7687 | **RHD4-02-002-C014-(CCTV)-Civil Works** |  |  |  |  |
|  | 8459 | **RHD4-02-002-Z9** |  | 2026-08-17 | 2028-01-19 |  |
|  | 8649 | **RHD4-02-002-Z9-C071** |  | 2026-08-17 | 2028-01-19 |  |
|  | 8680 | **RHD4-02-002-Z9-C071-Crossings Sewage Network - SWCr** |  |  |  |  |
|  | 8693 | **RHD4-02-002-C071-(SWCr)-MH Works - 1500 mm diameter with Back drop** |  |  |  |  |
|  | 8692 | **RHD4-02-002-C071-(SWCr)-MH Works - 1500 mm diameter** |  |  |  |  |
|  | 8690 | **RHD4-02-002-C071-(SWCr)-MH Works - 1200 mm diameter** |  |  |  |  |
|  | 8685 | **RHD4-02-002-C071-(SWCr)-GRP Pipes - 700 mm diameter** |  |  |  |  |
|  | 8686 | **RHD4-02-002-C071-(SWCr)-UPVC Pipes - 200 mm diameter** |  |  |  |  |
|  | 8724 | **RHD4-02-002-Z9-C071-Crossings Potable Network - PTCr** |  |  |  |  |
|  | 8727 | **RHD4-02-002-C071-(PTCr)-HDPE Pipes - 200 mm diameter** |  |  |  |  |
|  | 8726 | **RHD4-02-002-C071-(PTCr)-HDPE Pipes - 160 mm diameter** |  |  |  |  |
|  | 8737 | **RHD4-02-002-C071-(PTCr)-Fire Hydrant** |  |  |  |  |
|  | 8771 | **RHD4-02-002-Z9-C071-Crossings Irrigation Network - IRRC** |  |  |  |  |
|  | 8772 | **RHD4-02-002-C071-(IRRC)-HDPE Pipes - 160 mm diameter** |  |  |  |  |
|  | 8779 | **RHD4-02-002-C071-(IRRC)-HDPE Pipes - 500 mm diameter** |  |  |  |  |
|  | 8780 | **RHD4-02-002-C071-(IRRC)-Gate Valves (Direct Buried)** |  |  |  |  |
|  | 8781 | **RHD4-02-002-C071-(IRRC)-Butterfly Valve Chamber** |  |  |  |  |
|  | 8782 | **RHD4-02-002-C071-(IRRC)-Butterfly Valves** |  |  |  |  |
|  | 8828 | **RHD4-02-002-Z9-C071-Road Works - RD** |  | 2026-09-07 | 2028-01-19 |  |
|  | 8829 | **RHD4-02-002-C071-(RD)-Subgrade** |  | 2026-09-07 | 2026-09-12 |  |
| RHD4CZ9C071RD1100 |  | Supply, lay and compaction subgrade compacted thickness 300 mm for Roads - (RD-C-7/1)-Z9-C071-RD | 5d | 2026-09-07 | 2026-09-12 | RHD4ENSDZ9APPEW100, RHD4ENSDZ9APPRD220, RHD4CZ9C071TC3400, RHD4CZ9C071ICT3400, RHD4CZ9C071TC3400 FF, RHD4CZ9C071ICT3400 FF |
|  | 8830 | **RHD4-02-002-C071-(RD)-Aggregate Base Course** |  | 2026-09-13 | 2026-09-24 |  |
| RHD4CZ9C071RD2100 |  | Supply, lay and compaction Aggregate base course compacted thickness 300 mmfor Roads - (RD-C-7/1)-Z9-C071-RD | 10d | 2026-09-13 | 2026-09-24 | RHD4PRSHLDOSRD1000, RHD4PRSHLSTAGRD1000, RHD4CZ9C071RD1100 |
|  | 8831 | **RHD4-02-002-C071-(RD)-Bituminous base course Two Layers, including (MC1)&(RC2)** |  | 2026-09-26 | 2027-12-28 |  |
| RHD4CZ9C071RD3100 |  | Supply, lay and Asphaltic base course including Prime Coat (MC1) for 1st Layer - (RD-C-7/1)-Z9-C071-RD | 4d | 2026-09-26 | 2026-09-29 | RHD4PRSHLDOSRD1100, RHD4ENMSASPH2000, RHD4ENMSASPH2010, RHD4PRSHLSTAGRD1100, RHD4CZ9C071RD2100, RHD4CZ7RA05RD3100, RHD4CZ4RA02RD3100, RHD4CZ8RA04RD3100, RHD4CZ8C014RD3100 |
| RHD4CZ9C071RD3200 |  | Supply, lay and Asphaltic base course including Tack Coat (RC2) for 2nd Layer - (RD-C-7/1)-Z9-C071-RD | 4d | 2027-12-25 | 2027-12-28 | RHD4PRSHLDOSRD1100, RHD4PRSHLSTAGRD1100, RHD4CZ9C071CCTV6100 |
|  | 8833 | **RHD4-02-002-C071-(RD)-Precast Concrete Curb** |  | 2027-12-29 | 2028-01-05 |  |
| RHD4CZ9C071RD5100 |  | Supply and installation Precast Concrete Kerb for Roads - (RD-C-7/1)-Z9-C071-RD | 7d | 2027-12-29 | 2028-01-05 | RHD4PRSHLDOSRD1200, RHD4ENMSRD2000, RHD4ENMSRD2010, RHD4PRSHLSTAGRD1200, RHD4CZ9C071RD3200 |
|  | 8836 | **RHD4-02-002-C071-(RD)-Traffic Signage** |  | 2028-01-06 | 2028-01-13 |  |
| RHD4CZ9C071RD8100 |  | Installation of Traffic Signage for Road Network - (RD-C-7/1)-Z9-C071-RD | 7d | 2028-01-06 | 2028-01-13 | RHD4PRSHLDOSRD1600, RHD4PRSHLSTAGRD1600, RHD4CZ9C071RD5100 |
|  | 8834 | **RHD4-02-002-C071-(RD)-Precast Interlocking Block Pavers** |  |  |  |  |
|  | 8832 | **RHD4-02-002-C071-(RD)-Bituminous concrete wearing course including tack coat (RC2)** |  | 2028-01-15 | 2028-01-16 |  |
| RHD4CZ9C071RD4100 |  | Supply, lay and compaction Asphaltic wearing course including tack Coat (RC2)for Road Network - (RD-C-7/1)-Z9-C071-RD | 2d | 2028-01-15 | 2028-01-16 | RHD4CZ9C071RD5100, RHD4CZ9C071RD8100 |
|  | 8837 | **RHD4-02-002-C071-(RD)-Speed Table and Wheel Stopper** |  |  |  |  |
|  | 8835 | **RHD4-02-002-C071-(RD)-Pavement Marking** |  | 2028-01-17 | 2028-01-19 |  |
| RHD4CZ9C071RD7100 |  | Pavement Markings for Road Network - (RD-C-7/1)-Z9-C071-RD | 3d | 2028-01-17 | 2028-01-19 | RHD4PRSHLDOSRD1500, RHD4PRSHLSTAGRD1500, RHD4CZ9C071RD4100 |
|  | 8653 | **RHD4-02-002-Z9-C071-Storm Network - ST** |  | 2026-10-17 | 2026-12-10 |  |
|  | 8672 | **RHD4-02-002-C071-(ST)-MH Works - 2000 mm diameter** |  | 2026-11-05 | 2026-12-05 |  |
| RHD4CZ9C071ST3102 |  | Excavation and PC Blinding works for MH 2000 mm - (RD-C-7/1)-Z9-C071-ST | 5d | 2026-11-05 | 2026-11-10 | RHD4ENSDZ9APPST110, RHD4ENMSST2000, RHD4CZ9C071ST2100 |
| RHD4CZ9C071ST3202 |  | Installation of Base for MH 2000 mm - (RD-C-7/1)-Z9-C071-ST | 6d | 2026-11-11 | 2026-11-17 | RHD4PRSHLSTAGST1608, RHD4CZ9C071ST3102 |
| RHD4CZ9C071ST3302 |  | MH Ring and C.Slab works and Backfilling works for MH 2000 mm - (RD-C-7/1)-Z9-C071-ST | 6d | 2026-11-18 | 2026-11-24 | RHD4PRSHLDOSST1608, RHD4CZ9C071ST3202 |
| RHD4CZ9C071ST3402 |  | Steel Cover for MH 2000 mm - (RD-C-7/1)-Z9-C071-ST | 4d | 2026-11-25 | 2026-11-29 | RHD4PRSHLDOSST1708, RHD4PRSHLSTAGST1708, RHD4CZ9C071ST3302 |
| RHD4CZ9C071ST3502 |  | Finishing, Benching, Testing works for MH 2000 mm - (RD-C-7/1)-Z9-C071-ST | 5d | 2026-11-30 | 2026-12-05 | RHD4CZ9C071ST3402 |
|  | 8670 | **RHD4-02-002-C071-(ST)-MH Works - 1200 mm diameter** |  | 2026-11-16 | 2026-12-10 |  |
| RHD4CZ9C071ST3100 |  | Excavation and PC Blinding works for MH 1200 mm - (RD-C-7/1)-Z9-C071-ST | 4d | 2026-11-16 | 2026-11-19 | RHD4ENSDZ9APPST110, RHD4ENMSST2000, RHD4ENMSST2010, RHD4CZ9C071ST3101 |
| RHD4CZ9C071ST3200 |  | Installation of Base for MH 1200 mm - (RD-C-7/1)-Z9-C071-ST | 5d | 2026-11-21 | 2026-11-25 | RHD4PRSHLSTAGST1608, RHD4CZ9C071ST3100 |
| RHD4CZ9C071ST3300 |  | MH Ring and C.Slab works and Backfilling works for MH 1200 mm - (RD-C-7/1)-Z9-C071-ST | 5d | 2026-11-26 | 2026-12-01 | RHD4PRSHLDOSST1608, RHD4CZ9C071ST3200 |

| ID | WBS | Task | Duration | Start | Finish | Predecessors |
| --- | --- | --- | --- | --- | --- | --- |
| RHD4CZ9C071ST3400 |  | Steel Cover for MH 1200 mm - (RD-C-7/1)-Z9-C071-ST | 4d | 2026-12-02 | 2026-12-06 | RHD4PRSHLDOSST1708, RHD4PRSHLSTAGST1708, RHD4CZ9C071ST3300 |
| RHD4CZ9C071ST3500 |  | Finishing, Benching, Testing works for MH 1200 mm - (RD-C-7/1)-Z9-C071-ST | 4d | 2026-12-07 | 2026-12-10 | RHD4CZ9C071ST3400 |
|  | 8671 | **RHD4-02-002-C071-(ST)-MH Works - 1500 mm diameter** |  | 2026-11-11 | 2026-12-01 |  |
| RHD4CZ9C071ST3101 |  | Excavation and PC Blinding works for MH 1500 mm - (RD-C-7/1)-Z9-C071-ST | 4d | 2026-11-11 | 2026-11-15 | RHD4ENSDZ9APPST110, RHD4ENMSST2000, RHD4CZ9C071ST3102 |
| RHD4CZ9C071ST3201 |  | Installation of Base for MH 1500 mm - (RD-C-7/1)-Z9-C071-ST | 4d | 2026-11-16 | 2026-11-19 | RHD4PRSHLSTAGST1608, RHD4CZ9C071ST3101 |
| RHD4CZ9C071ST3301 |  | MH Ring and C.Slab works and Backfilling works for MH 1500 mm - (RD-C-7/1)-Z9-C071-ST | 4d | 2026-11-21 | 2026-11-24 | RHD4PRSHLDOSST1608, RHD4CZ9C071ST3201 |
| RHD4CZ9C071ST3401 |  | Steel Cover for MH 1500 mm - (RD-C-7/1)-Z9-C071-ST | 2d | 2026-11-25 | 2026-11-26 | RHD4PRSHLDOSST1708, RHD4PRSHLSTAGST1708, RHD4CZ9C071ST3301 |
| RHD4CZ9C071ST3501 |  | Finishing, Benching, Testing works for MH 1500 mm - (RD-C-7/1)-Z9-C071-ST | 4d | 2026-11-28 | 2026-12-01 | RHD4CZ9C071ST3401 |
|  | 8661 | **RHD4-02-002-C071-(ST)-GRP Pipes - 1100 mm diameter** |  | 2026-10-17 | 2026-10-27 |  |
| RHD4CZ9C071ST1107 |  | Excavation works for GRP Pipe Line 1100 mm - (RD-C-7/1)-Z9-C071-ST | 2d | 2026-10-17 | 2026-10-18 | RHD4ENSDZ9APPST110, RHD4CZ9C071RW3000, RHD4CZ6A015IRR1100 |
| RHD4CZ9C071ST1207 |  | Bedding works for GRP Pipe Line 1100 mm - (RD-C-7/1)-Z9-C071-ST | 2d | 2026-10-19 | 2026-10-20 | RHD4CZ9C071ST1107 |
| RHD4CZ9C071ST1307 |  | Installing for GRP Pipe Line 1100 mm - (RD-C-7/1)-Z9-C071-ST | 2d | 2026-10-21 | 2026-10-22 | RHD4PRSHLSTAGST1008, RHD4CZ9C071ST1207, RHD4PRSHLDOSST1608, RHD4PRSHLPOST1000, RHD4PRSHLDOSST1008, RHD4PRSHLDOSST1604, RHD4PRSHLDOSST1004 |
| RHD4CZ9C071ST1407 |  | Primary Test for GRP Pipe Line 1100 mm - (RD-C-7/1)-Z9-C071-ST | 2d | 2026-10-24 | 2026-10-25 | RHD4CZ9C071ST1307 |
| RHD4CZ9C071ST1507 |  | Backfilling and warning tape works for GRP Pipe Line 1100 mm - (RD-C-7/1)-Z9-C071-ST | 2d | 2026-10-26 | 2026-10-27 | RHD4CZ9C071ST1407 |
|  | 8660 | **RHD4-02-002-C071-(ST)-GRP Pipes - 1000 mm diameter** |  | 2026-10-17 | 2026-10-31 |  |
| RHD4CZ9C071ST1106 |  | Excavation works for GRP Pipe Line 1000 mm - (RD-C-7/1)-Z9-C071-ST | 3d | 2026-10-17 | 2026-10-19 | RHD4ENSDZ9APPST110, RHD4CZ9C071ST1107 SS |
| RHD4CZ9C071ST1206 |  | Bedding works for GRP Pipe Line 1000 mm - (RD-C-7/1)-Z9-C071-ST | 3d | 2026-10-20 | 2026-10-22 | RHD4CZ9C071ST1106 |
| RHD4CZ9C071ST1306 |  | Installing for GRP Pipe Line 1000 mm - (RD-C-7/1)-Z9-C071-ST | 2d | 2026-10-24 | 2026-10-25 | RHD4PRSHLSTAGST1008, RHD4CZ9C071ST1206, RHD4CZ9C071ST1307, RHD4PRSHLDOSST1608, RHD4PRSHLPOST1000, RHD4PRSHLDOSST1008, RHD4PRSHLDOSST1604, RHD4PRSHLDOSST1004 |
| RHD4CZ9C071ST1406 |  | Primary Test for GRP Pipe Line 1000 mm - (RD-C-7/1)-Z9-C071-ST | 2d | 2026-10-26 | 2026-10-27 | RHD4CZ9C071ST1306 |
| RHD4CZ9C071ST1506 |  | Backfilling and warning tape works for GRP Pipe Line 1000 mm - (RD-C-7/1)-Z9-C071-ST | 3d | 2026-10-28 | 2026-10-31 | RHD4CZ9C071ST1406, RHD4CZ9C071ST1507 |
|  | 8659 | **RHD4-02-002-C071-(ST)-GRP Pipes - 900 mm diameter** |  | 2026-10-20 | 2026-11-02 |  |
| RHD4CZ9C071ST1105 |  | Excavation works for GRP Pipe Line 900 mm - (RD-C-7/1)-Z9-C071-ST | 2d | 2026-10-20 | 2026-10-21 | RHD4ENSDZ9APPST110, RHD4CZ9C071ST1106 |
| RHD4CZ9C071ST1205 |  | Bedding works for GRP Pipe Line 900 mm - (RD-C-7/1)-Z9-C071-ST | 2d | 2026-10-22 | 2026-10-24 | RHD4CZ9C071ST1105 |
| RHD4CZ9C071ST1305 |  | Installing for GRP Pipe Line 900 mm - (RD-C-7/1)-Z9-C071-ST | 2d | 2026-10-26 | 2026-10-27 | RHD4PRSHLSTAGST1008, RHD4CZ9C071ST1205, RHD4CZ9C071ST1306, RHD4PRSHLDOSST1608, RHD4PRSHLPOST1000, RHD4PRSHLDOSST1008, RHD4PRSHLDOSST1604, RHD4PRSHLDOSST1004 |
| RHD4CZ9C071ST1405 |  | Primary Test for GRP Pipe Line 900 mm - (RD-C-7/1)-Z9-C071-ST | 2d | 2026-10-28 | 2026-10-29 | RHD4CZ9C071ST1305 |
| RHD4CZ9C071ST1505 |  | Backfilling and warning tape works for GRP Pipe Line 900 mm - (RD-C-7/1)-Z9-C071-ST | 2d | 2026-11-01 | 2026-11-02 | RHD4CZ9C071ST1405, RHD4CZ9C071ST1506 |
|  | 8656 | **RHD4-02-002-C071-(ST)-GRP Pipes - 600 mm diameter** |  | 2026-10-22 | 2026-11-03 |  |
| RHD4CZ9C071ST1102 |  | Excavation works for GRP Pipe Line 600 mm - (RD-C-7/1)-Z9-C071-ST | 2d | 2026-10-22 | 2026-10-24 | RHD4ENSDZ9APPST110, RHD4CZ9C071ST1105 |
| RHD4CZ9C071ST1202 |  | Bedding works for GRP Pipe Line 600 mm - (RD-C-7/1)-Z9-C071-ST | 2d | 2026-10-25 | 2026-10-26 | RHD4CZ9C071ST1102 |
| RHD4CZ9C071ST1302 |  | Installing for GRP Pipe Line 600 mm - (RD-C-7/1)-Z9-C071-ST | 2d | 2026-10-28 | 2026-10-29 | RHD4PRSHLSTAGST1008, RHD4CZ9C071ST1202, RHD4CZ9C071ST1305, RHD4PRSHLDOSST1608, RHD4PRSHLPOST1000, RHD4PRSHLDOSST1008, RHD4PRSHLDOSST1604, RHD4PRSHLDOSST1004 |
| RHD4CZ9C071ST1402 |  | Primary Test for GRP Pipe Line 600 mm - (RD-C-7/1)-Z9-C071-ST | 2d | 2026-10-31 | 2026-11-01 | RHD4CZ9C071ST1302 |
| RHD4CZ9C071ST1502 |  | Backfilling and warning tape works for GRP Pipe Line 600 mm - (RD-C-7/1)-Z9-C071-ST | 2d | 2026-11-02 | 2026-11-03 | RHD4CZ9C071ST1402 |
|  | 8655 | **RHD4-02-002-C071-(ST)-GRP Pipes - 500 mm diameter** |  | 2026-10-25 | 2026-11-04 |  |
| RHD4CZ9C071ST1101 |  | Excavation works for GRP Pipe Line 500 mm - (RD-C-7/1)-Z9-C071-ST | 2d | 2026-10-25 | 2026-10-26 | RHD4ENSDZ9APPST110, RHD4CZ9C071ST1102 |
| RHD4CZ9C071ST1201 |  | Bedding works for GRP Pipe Line 500 mm - (RD-C-7/1)-Z9-C071-ST | 2d | 2026-10-27 | 2026-10-28 | RHD4CZ9C071ST1101 |
| RHD4CZ9C071ST1301 |  | Installing for GRP Pipe Line 500 mm - (RD-C-7/1)-Z9-C071-ST | 2d | 2026-10-29 | 2026-10-31 | RHD4PRSHLSTAGST1008, RHD4CZ9C071ST1201, RHD4PRSHLDOSST1608, RHD4PRSHLPOST1000, RHD4PRSHLDOSST1008, RHD4PRSHLDOSST1604, RHD4PRSHLDOSST1004 |
| RHD4CZ9C071ST1401 |  | Primary Test for GRP Pipe Line 500 mm - (RD-C-7/1)-Z9-C071-ST | 2d | 2026-11-01 | 2026-11-02 | RHD4CZ9C071ST1301 |
| RHD4CZ9C071ST1501 |  | Backfilling and warning tape works for GRP Pipe Line 500 mm - (RD-C-7/1)-Z9-C071-ST | 2d | 2026-11-03 | 2026-11-04 | RHD4CZ9C071ST1401 |
|  | 8654 | **RHD4-02-002-C071-(ST)-GRP Pipes - 400 mm diameter** |  | 2026-10-27 | 2026-11-07 |  |
| RHD4CZ9C071ST1100 |  | Excavation works for GRP Pipe Line 400 mm - (RD-C-7/1)-Z9-C071-ST | 2d | 2026-10-27 | 2026-10-28 | RHD4ENSDZ9APPST110, RHD4CZ9C071ST1101 |
| RHD4CZ9C071ST1200 |  | Bedding works for GRP Pipe Line 400 mm - (RD-C-7/1)-Z9-C071-ST | 2d | 2026-10-29 | 2026-10-31 | RHD4CZ9C071ST1100 |
| RHD4CZ9C071ST1300 |  | Installing for GRP Pipe Line 400 mm - (RD-C-7/1)-Z9-C071-ST | 2d | 2026-11-01 | 2026-11-02 | RHD4PRSHLSTAGST1008, RHD4CZ9C071ST1200, RHD4PRSHLDOSST1608, RHD4PRSHLPOST1000, RHD4PRSHLDOSST1008, RHD4PRSHLDOSST1604, RHD4PRSHLDOSST1004 |
| RHD4CZ9C071ST1400 |  | Primary Test for GRP Pipe Line 400 mm - (RD-C-7/1)-Z9-C071-ST | 2d | 2026-11-03 | 2026-11-04 | RHD4CZ9C071ST1300 |
| RHD4CZ9C071ST1500 |  | Backfilling and warning tape works for GRP Pipe Line 400 mm - (RD-C-7/1)-Z9-C071-ST | 2d | 2026-11-05 | 2026-11-07 | RHD4CZ9C071ST1400 |
|  | 8668 | **RHD4-02-002-C071-(ST)-UPVC Pipes - 300 mm diameter** |  | 2026-10-29 | 2026-11-29 |  |
| RHD4CZ9C071ST2100 |  | Excavation works for UPVC Pipe Line 300 mm - (RD-C-7/1)-Z9-C071-ST | 6d | 2026-10-29 | 2026-11-04 | RHD4ENSDZ9APPST110, RHD4CZ9C071ST1100 |
| RHD4CZ9C071ST2200 |  | Bedding works for UPVC Pipe Line 300 mm - (RD-C-7/1)-Z9-C071-ST | 5d | 2026-11-05 | 2026-11-10 | RHD4CZ9C071ST2100 |
| RHD4CZ9C071ST2300 |  | Installing for UPVC Pipe Line 300 mm - (RD-C-7/1)-Z9-C071-ST | 6d | 2026-11-11 | 2026-11-17 | RHD4PRSHLDOSST1108, RHD4PRSHLSTAGST1108, RHD4CZ9C071ST2200 |
| RHD4CZ9C071ST2400 |  | Primary Test for UPVC Pipe Line 300 mm - (RD-C-7/1)-Z9-C071-ST | 4d | 2026-11-18 | 2026-11-22 | RHD4CZ9C071ST2300 |
| RHD4CZ9C071ST2500 |  | Backfilling and warning tape works for UPVC Pipe Line 300 mm - (RD-C-7/1)-Z9-C071-ST | 6d | 2026-11-23 | 2026-11-29 | RHD4CZ9C071ST2400, RHD4CZ9C071ST6100 |
|  | 8676 | **RHD4-02-002-C071-(ST)-Concrete Encasement** |  | 2026-11-16 | 2026-11-17 |  |
| RHD4CZ9C071ST6100 |  | Pipe Encasement for Storm Pipelines - (RD-C-7/1)-Z9-C071-ST | 2d | 2026-11-16 | 2026-11-17 | RHD4CZ9C071ST2300 SS, RHD4CZ9C071ST2300 FF, RHD4CZ9C071ST2200 |
|  | 8677 | **RHD4-02-002-Z9-C071-Catch Basin - ST** |  | 2026-12-02 | 2027-01-19 |  |
|  | 8678 | **RHD4-02-002-C071-(ST)-Single Catch Basin Works** |  | 2026-12-02 | 2027-01-19 |  |
| RHD4CZ9C071ST7100 |  | Excavation works for Single Catch Basin - (RD-C-7/1)-Z9-C071-ST | 7d | 2026-12-02 | 2026-12-09 | RHD4ENSDZ9APPST110, RHD4CZ9C071ST3300, RHD4CZ9C071ST3301 |
| RHD4CZ9C071ST7200 |  | PC Blinding, Installation and Pipe connection for Single Catch Basin - (RD-C-7/1)-Z9-C071-ST | 7d | 2026-12-10 | 2026-12-17 | RHD4CZ9C071ST7100 |
| RHD4CZ9C071ST7300 |  | Rings & C.Slab & Final Backfill for Single Catch Basin - (RD-C-7/1)-Z9-C071-ST | 8d | 2026-12-19 | 2026-12-27 | RHD4PRSHLDOSST1308, RHD4PRSHLSTAGST1308, RHD4CZ9C071ST7200 |
| RHD4CZ9C071ST7400 |  | Steel Cover for Single Catch Basin - (RD-C-7/1)-Z9-C071-ST | 7d | 2026-12-28 | 2027-01-04 | RHD4PRSHLDOSST1708, RHD4CZ9C071ST7300 |
| RHD4CZ9C071ST7500 |  | Finishing and Insulation works for Single Catch Basin - (RD-C-7/1)-Z9-C071-ST | 13d | 2027-01-05 | 2027-01-19 | RHD4CZ9C071ST7400 |
|  | 8702 | **RHD4-02-002-Z9-C071-Sewage Network - SW** |  | 2027-01-05 | 2027-02-24 |  |
|  | 8714 | **RHD4-02-002-C071-(SW)-MH Works - 1500 mm diameter** |  |  |  |  |
|  | 1895 | **RHD4-02-002-C071-(SW)-GRP Pipes - 500 mm diameter** |  | 2027-01-05 | 2027-01-27 |  |
| RHD4CZ9C071SW1102 |  | Excavation works for GRP Pipe Line 500 mm - (RD-C-7/1)-Z9-C071-SW | 4d | 2027-01-05 | 2027-01-09 | RHD4CZ9C071ST7400, RHD4CZ9C071ST2500 |
| RHD4CZ9C071SW1202 |  | Bedding works for GRP Pipe Line 500 mm - (RD-C-7/1)-Z9-C071-SW | 4d | 2027-01-10 | 2027-01-13 | RHD4CZ9C071SW1102 |
| RHD4CZ9C071SW1302 |  | Installing for GRP Pipe Line 500 mm - (RD-C-7/1)-Z9-C071-SW | 4d | 2027-01-14 | 2027-01-18 | RHD4CZ9C071SW1202 |
| RHD4CZ9C071SW1402 |  | Primary Test for GRP Pipe Line 500 mm - (RD-C-7/1)-Z9-C071-SW | 4d | 2027-01-19 | 2027-01-23 | RHD4CZ9C071SW1302 |
| RHD4CZ9C071SW1502 |  | Backfilling and warning tape works for GRP Pipe Line 500 mm - (RD-C-7/1)-Z9-C071-SW | 4d | 2027-01-24 | 2027-01-27 | RHD4CZ9C071SW1402 |
|  | 3794 | **RHD4-02-002-C071-(SW)-MH Works - 1200 mm diameter** |  | 2027-01-10 | 2027-02-24 |  |
| RHD4CZ9C071SW3100 |  | Excavation and PC Blinding works for MH 1200 mm - (RD-C-7/1)-Z9-C071-SW | 5d | 2027-01-10 | 2027-01-14 | RHD4CZ9C071SW1102 |
| RHD4CZ9C071SW3200 |  | Installation of Base for MH 1200 mm - (RD-C-7/1)-Z9-C071-SW | 10d | 2027-01-16 | 2027-01-26 | RHD4CZ9C071SW3100 |

| ID | WBS | Task | Duration | Start | Finish | Predecessors |
| --- | --- | --- | --- | --- | --- | --- |
| RHD4CZ9C071SW3300 |  | MH Ring and C.Slab works and Backfilling works for MH 1200 mm - (RD-C-7/1)-Z9-C071-SW | 10d | 2027-01-27 | 2027-02-07 | RHD4CZ9C071SW3200 |
| RHD4CZ9C071SW3400 |  | Steel Cover for MH 1200 mm - (RD-C-7/1)-Z9-C071-SW | 4d | 2027-02-08 | 2027-02-11 | RHD4CZ9C071SW3300 |
| RHD4CZ9C071SW3500 |  | Finishing, Benching, Testing works for MH 1200 mm - (RD-C-7/1)-Z9-C071-SW | 10d | 2027-02-13 | 2027-02-24 | RHD4CZ9C071SW3400 |
|  | 8707 | **RHD4-02-002-C071-(SW)-GRP Pipes - 700 mm diameter** |  |  |  |  |
|  | 8708 | **RHD4-02-002-C071-(SW)-UPVC Pipes - 200 mm diameter** |  |  |  |  |
|  | 8711 | **RHD4-02-002-C071-(SW)-Concrete Encasement** |  |  |  |  |
|  | 8739 | **RHD4-02-002-Z9-C071-Potable Network - PT** |  | 2027-01-28 | 2027-02-21 |  |
|  | 8742 | **RHD4-02-002-C071-(PT)-HDPE Pipes - 200 mm diameter** |  | 2027-01-28 | 2027-02-09 |  |
| RHD4CZ9C071PT1102 |  | Excavation works for HDPE Pipline 200 mm - (RD-C-7/1)-Z9-C071-PT | 2d | 2027-01-28 | 2027-01-30 | RHD4ENSDZ9APPPT130, RHD4ENMSPT2000, RHD4CZ9C071SW1502 |
| RHD4CZ9C071PT1202 |  | Bedding works for HDPE Pipline 200 mm - (RD-C-7/1)-Z9-C071-PT | 2d | 2027-01-31 | 2027-02-01 | RHD4CZ9C071PT1102 |
| RHD4CZ9C071PT1302 |  | Installing for HDPE Pipline 200 mm - (RD-C-7/1)-Z9-C071-PT | 3d | 2027-02-02 | 2027-02-04 | RHD4PRSHLDOSPT1000, RHD4PRSHLSTAGPT1000, RHD4CZ9C071PT1202 |
| RHD4CZ9C071PT1402 |  | Primary Test for HDPE Pipline 200 mm - (RD-C-7/1)-Z9-C071-PT | 2d | 2027-02-06 | 2027-02-07 | RHD4CZ9C071PT1302, RHD4CZ9C071PT3100 |
| RHD4CZ9C071PT1502 |  | Backfilling and warning tape works for HDPE Pipline 200 mm - (RD-C-7/1)-Z9-C071-PT | 2d | 2027-02-08 | 2027-02-09 | RHD4CZ9C071PT1402 |
|  | 8741 | **RHD4-02-002-C071-(PT)-HDPE Pipes - 160 mm diameter** |  | 2027-01-31 | 2027-02-18 |  |
| RHD4CZ9C071PT1101 |  | Excavation works for HDPE Pipline 160 mm - (RD-C-7/1)-Z9-C071-PT | 3d | 2027-01-31 | 2027-02-02 | RHD4ENSDZ9APPPT130, RHD4ENMSPT2000, RHD4CZ9C071PT1102 |
| RHD4CZ9C071PT1201 |  | Bedding works for HDPE Pipline 160 mm - (RD-C-7/1)-Z9-C071-PT | 3d | 2027-02-03 | 2027-02-06 | RHD4CZ9C071PT1101, RHD4CZ9C071PT1202 |
| RHD4CZ9C071PT1301 |  | Installing for HDPE Pipline 160 mm - (RD-C-7/1)-Z9-C071-PT | 5d | 2027-02-07 | 2027-02-11 | RHD4PRSHLDOSPT1000, RHD4PRSHLSTAGPT1000, RHD4CZ9C071PT1201, RHD4CZ9C071PT1302 |
| RHD4CZ9C071PT1401 |  | Primary Test for HDPE Pipline 160 mm - (RD-C-7/1)-Z9-C071-PT | 2d | 2027-02-13 | 2027-02-14 | RHD4CZ9C071PT1301, RHD4CZ9C071PT1402 |
| RHD4CZ9C071PT1501 |  | Backfilling and warning tape works for HDPE Pipline 160 mm - (RD-C-7/1)-Z9-C071-PT | 4d | 2027-02-15 | 2027-02-18 | RHD4CZ9C071PT1401, RHD4CZ9C071PT1502 |
|  | 8745 | **RHD4-02-002-C071-(PT)-Gate Valves (Direct Buried)** |  | 2027-02-03 | 2027-02-21 |  |
| RHD4CZ9C071PT3100 |  | Installation for Direct Buried Gate Valves - (RD-C-7/1)-Z9-C071-PT | 2d | 2027-02-03 | 2027-02-04 | RHD4PRSHLDOSPT1200, RHD4PRSHLSTAGPT1200, RHD4CZ9C071PT1302 FF, RHD4CZ9C071PT1302 SS |
| RHD4CZ9C071PT3200 |  | Stem and Service box for Direct Buried Gate Valves - (RD-C-7/1)-Z9-C071-PT | 2d | 2027-02-20 | 2027-02-21 | RHD4PRSHLDOSPT1300, RHD4PRSHLSTAGPT1300, RHD4CZ9C071PT3100, RHD4CZ9C071PT1502, RHD4CZ9C071PT1501 |
|  | 8748 | **RHD4-02-002-C071-(PT)-Wash out Valve Chambers** |  | 2027-01-31 | 2027-02-08 |  |
| RHD4CZ9C071PT2101 |  | Excavation and Bedding for Wash out Valve Chambers for Potable Water Network - (RD-C-7/1)-Z9-C071-PT | 2d | 2027-01-31 | 2027-02-01 | RHD4ENSDZ9APPPT130, RHD4CZ9C071PT1102 |
| RHD4CZ9C071PT2201 |  | PC works for Wash out Valve Chambers for Potable Water Network - (RD-C-7/1)-Z9-C071-PT | 2d | 2027-02-02 | 2027-02-03 | RHD4CZ9C071PT2101 |
| RHD4CZ9C071PT2301 |  | Installation for Wash out Valve Chambers for Potable Water Network - (RD-C-7/1)-Z9-C071-PT | 2d | 2027-02-04 | 2027-02-06 | RHD4PRSHLDOSPT1100, RHD4PRSHLDOSPT1400, RHD4PRSHLSTAGPT1100, RHD4PRSHLSTAGPT1400, RHD4CZ9C071PT2201 |
| RHD4CZ9C071PT2401 |  | Backfilling works for Wash out Valve Chambers for Potable Water Network - (RD-C-7/1)-Z9-C071-PT | 2d | 2027-02-07 | 2027-02-08 | RHD4CZ9C071PT2301 |
|  | 8749 | **RHD4-02-002-C071-(PT)-Wash out Valves** |  | 2027-02-07 | 2027-02-10 |  |
| RHD4CZ9C071PT3102 |  | Installation for Wash out Valves for Potable Water Network - (RD-C-7/1)-Z9-C071-PT | 2d | 2027-02-07 | 2027-02-08 | RHD4PRSHLDOSPT1200, RHD4PRSHLSTAGPT1200, RHD4CZ9C071PT2301 |
| RHD4CZ9C071PT3202 |  | Stem and Service box for Wash out Valves for Potable Water Network - (RD-C-7/1)-Z9-C071-PT | 2d | 2027-02-09 | 2027-02-10 | RHD4PRSHLDOSPT1300, RHD4PRSHLSTAGPT1300, RHD4CZ9C071PT3102, RHD4CZ9C071PT2401 |
|  | 8750 | **RHD4-02-002-C071-(PT)-Air Valve Chambers** |  | 2027-02-02 | 2027-02-10 |  |
| RHD4CZ9C071PT2102 |  | Excavation and Bedding for Air Valve Chambers for Potable Water Network - (RD-C-7/1)-Z9-C071-PT | 2d | 2027-02-02 | 2027-02-03 | RHD4ENSDZ9APPPT130, RHD4CZ9C071PT2101 |
| RHD4CZ9C071PT2202 |  | PC works for Air Valve Chambers for Potable Water Network - (RD-C-7/1)-Z9-C071-PT | 2d | 2027-02-04 | 2027-02-06 | RHD4CZ9C071PT2102 |
| RHD4CZ9C071PT2302 |  | Installation for Air Valve Chambers for Potable Water Network - (RD-C-7/1)-Z9-C071-PT | 2d | 2027-02-07 | 2027-02-08 | RHD4PRSHLDOSPT1100, RHD4PRSHLDOSPT1400, RHD4PRSHLSTAGPT1100, RHD4PRSHLSTAGPT1400, RHD4CZ9C071PT2202 |
| RHD4CZ9C071PT2402 |  | Backfilling works for Air Valve Chambers for Potable Water Network - (RD-C-7/1)-Z9-C071-PT | 2d | 2027-02-09 | 2027-02-10 | RHD4CZ9C071PT2302 |
|  | 8751 | **RHD4-02-002-C071-(PT)-Air Valves** |  | 2027-01-31 | 2027-02-03 |  |
| RHD4CZ9C071PT3103 |  | Installation for Air Valves for Potable Water Network - (RD-C-7/1)-Z9-C071-PT | 2d | 2027-01-31 | 2027-02-01 | RHD4PRSHLDOSPT1200, RHD4PRSHLSTAGPT1200, RHD4CZ9C071PT1102 |
| RHD4CZ9C071PT3203 |  | Stem and Service box for Air Valves for Potable Water Network - (RD-C-7/1)-Z9-C071-PT | 2d | 2027-02-02 | 2027-02-03 | RHD4PRSHLDOSPT1300, RHD4PRSHLSTAGPT1300, RHD4CZ9C071PT3103 |
|  | 8752 | **RHD4-02-002-C071-(PT)-Fire Hydrant** |  | 2027-02-04 | 2027-02-16 |  |
| RHD4CZ9C071PT4100 |  | Excavation and Bedding and Pipe Installation for Fire Hydrant - (RD-C-7/1)-Z9-C071-PT | 3d | 2027-02-04 | 2027-02-07 | RHD4ENSDZ9APPPT130, RHD4CZ9C071PT2102 |
| RHD4CZ9C071PT4200 |  | Valve Installation for Fire Hydrant - (RD-C-7/1)-Z9-C071-PT | 2d | 2027-02-08 | 2027-02-09 | RHD4CZ9C071PT4100 |
| RHD4CZ9C071PT4300 |  | Stem for Fire Hydrant - (RD-C-7/1)-Z9-C071-PT | 2d | 2027-02-10 | 2027-02-11 | RHD4CZ9C071PT4200 |
| RHD4CZ9C071PT4400 |  | Fire Installation for Fire Hydrant - (RD-C-7/1)-Z9-C071-PT | 2d | 2027-02-13 | 2027-02-14 | RHD4PRSHLDOSPT1500, RHD4PRSHLSTAGPT1500, RHD4CZ9C071PT4300 |
| RHD4CZ9C071PT4500 |  | Protection Barriers for Fire Hydrant - (RD-C-7/1)-Z9-C071-PT | 2d | 2027-02-15 | 2027-02-16 | RHD4CZ9C071PT4400 |
|  | 8754 | **RHD4-02-002-Z9-C071-Irrigation Network - IRR** |  | 2027-02-11 | 2027-03-08 |  |
|  | 8762 | **RHD4-02-002-C071-(IRR)-HDPE Pipes - 500 mm diameter** |  | 2027-02-11 | 2027-03-07 |  |
| RHD4CZ9C071IRR1107 |  | Excavation works for HDPE Pipline 500 mm - (RD-C-7/1)-Z9-C071-IRR | 5d | 2027-02-11 | 2027-02-16 | RHD4ENSDZ9APPIRR140, RHD4ENMSRR2000, RHD4CZ9C071PT1102 SS, RHD4CZ9C071PT2402 |
| RHD4CZ9C071IRR1207 |  | Bedding works for HDPE Pipline 500 mm - (RD-C-7/1)-Z9-C071-IRR | 4d | 2027-02-17 | 2027-02-21 | RHD4CZ9C071IRR1107 |
| RHD4CZ9C071IRR1307 |  | Installing for HDPE Pipline 500 mm - (RD-C-7/1)-Z9-C071-IRR | 5d | 2027-02-23 | 2027-02-28 | RHD4PRSHLDOSIRR1000, RHD4PRSHLSTAGIRR1000, RHD4CZ9C071IRR1207 |
| RHD4CZ9C071IRR1407 |  | Primary Test for HDPE Pipline 500 mm - (RD-C-7/1)-Z9-C071-IRR | 2d | 2027-03-01 | 2027-03-02 | RHD4CZ9C071IRR1307 |
| RHD4CZ9C071IRR1507 |  | Backfilling and warning tape works for HDPE Pipline 500 mm - (RD-C-7/1)-Z9-C071-IRR | 4d | 2027-03-03 | 2027-03-07 | RHD4CZ9C071IRR1407 |
|  | 8755 | **RHD4-02-002-C071-(IRR)-HDPE Pipes - 160 mm diameter** |  | 2027-02-17 | 2027-03-08 |  |
| RHD4CZ9C071IRR1100 |  | Excavation works for HDPE Pipline 160 mm - (RD-C-7/1)-Z9-C071-IRR | 4d | 2027-02-17 | 2027-02-21 | RHD4ENSDZ9APPIRR140, RHD4ENMSRR2000, RHD4CZ9C071IRR1107 |
| RHD4CZ9C071IRR1200 |  | Bedding works for HDPE Pipline 160 mm - (RD-C-7/1)-Z9-C071-IRR | 3d | 2027-02-23 | 2027-02-25 | RHD4CZ9C071IRR1100 |
| RHD4CZ9C071IRR1300 |  | Installing for HDPE Pipline 160 mm - (RD-C-7/1)-Z9-C071-IRR | 4d | 2027-02-27 | 2027-03-02 | RHD4PRSHLDOSIRR1000, RHD4PRSHLSTAGIRR1000, RHD4CZ9C071IRR1200 |
| RHD4CZ9C071IRR1400 |  | Primary Test for HDPE Pipline 160 mm - (RD-C-7/1)-Z9-C071-IRR | 2d | 2027-03-03 | 2027-03-04 | RHD4CZ9C071IRR1300 |
| RHD4CZ9C071IRR1500 |  | Backfilling and warning tape works for HDPE Pipline 160 mm - (RD-C-7/1)-Z9-C071-IRR | 3d | 2027-03-06 | 2027-03-08 | RHD4CZ9C071IRR1400 |
|  | 6116 | **RHD4-02-002-C071-(IRR)-Butterfly Valve Chamber** |  | 2027-02-23 | 2027-03-03 |  |
| RHD4CZ9C071IRR2100 |  | Excavation and Bedding for Butterfly Valve Chamber for Irrigation Network - (RD-C-7/1)-Z9-C071-IRR | 2d | 2027-02-23 | 2027-02-24 | RHD4CZ9C071IRR1100 |
| RHD4CZ9C071IRR2200 |  | PC works for Butterfly Valve Chamber for Irrigation Network - (RD-C-7/1)-Z9-C071-IRR | 2d | 2027-02-25 | 2027-02-27 | RHD4CZ9C071IRR2100 |
| RHD4CZ9C071IRR2300 |  | Installation for Butterfly Valve Chamber for Irrigation Network - (RD-C-7/1)-Z9-C071-IRR | 2d | 2027-02-28 | 2027-03-01 | RHD4CZ9C071IRR2200 |
| RHD4CZ9C071IRR2400 |  | Backfilling works for Butterfly Valve Chamber for Irrigation Network - (RD-C-7/1)-Z9-C071-IRR | 2d | 2027-03-02 | 2027-03-03 | RHD4CZ9C071IRR2300 |
|  | 6117 | **RHD4-02-002-C071-(IRR)-Butterfly Valves** |  | 2027-03-03 | 2027-03-07 |  |
| RHD4CZ9C071IRR3101 |  | Installation for Butterfly Valves for Irrigation Network - (RD-C-7/1)-Z9-C071-IRR | 2d | 2027-03-03 | 2027-03-04 | RHD4CZ9C071IRR2300, RHD4CZ9C071IRR1300 |
| RHD4CZ9C071IRR3201 |  | Stem and Service box for Butterfly Valves for Irrigation Network - (RD-C-7/1)-Z9-C071-IRR | 2d | 2027-03-06 | 2027-03-07 | RHD4CZ9C071IRR3101, RHD4CZ9C071IRR2400 |
|  | 8788 | **RHD4-02-002-Z9-C071-Medium Voltage Network - MV** |  | 2026-09-30 | 2026-11-16 |  |
|  | 8789 | **RHD4-02-002-C071-(MV)-Medium Voltage cable trench** |  | 2026-09-30 | 2026-11-16 |  |
| RHD4CZ9C071MV1100 |  | Excavation for Medium Voltage Trench - (RD-C-7/1)-Z9-C071-MV | 9d | 2026-09-30 | 2026-10-10 | RHD4ENSDZ9APPMV150, RHD4CZ9C071RD3100 |
| RHD4CZ9C071MV1200 |  | Trench Backfilling for Medium Voltage Network - (RD-C-7/1)-Z9-C071-MV | 9d | 2026-11-07 | 2026-11-16 | RHD4CZ9C071MV3300 |
|  | 8790 | **RHD4-02-002-C071-(MV)-Medium Voltage duct banks** |  | 2026-10-11 | 2026-10-29 |  |

| ID | WBS | Task | Duration | Start | Finish | Predecessors |
| --- | --- | --- | --- | --- | --- | --- |
| RHD4CZ9C071MV2100 |  | Excavation of Duct Banks for Medium Voltage Network - (RD-C-7/1)-Z9-C071-MV | 4d | 2026-10-11 | 2026-10-14 | RHD4ENSDZ9APPMV150, RHD4CZ9C071MV1100 |
| RHD4CZ9C071MV2200 |  | Installation of Duct Banks for Medium Voltage Network - (RD-C-7/1)-Z9-C071-MV | 6d | 2026-10-15 | 2026-10-21 | RHD4PRSHLDOSMV1000, RHD4PRSHLSTAGMV1000, RHD4CZ9C071MV2100 |
| RHD4CZ9C071MV2300 |  | Pouring of Duct Banks for Medium Voltage Network - (RD-C-7/1)-Z9-C071-MV | 4d | 2026-10-22 | 2026-10-26 | RHD4CZ9C071MV2200 |
| RHD4CZ9C071MV2400 |  | Backfilling of Duct Banks for Medium Voltage Network - (RD-C-7/1)-Z9-C071-MV | 3d | 2026-10-27 | 2026-10-29 | RHD4CZ9C071MV2300 |
|  | 8791 | **RHD4-02-002-C071-(MV)-Medium Voltage cables 3Cx 500 mm²** |  | 2026-10-11 | 2026-11-05 |  |
| RHD4CZ9C071MV3100 |  | Installation of Medium Voltage Cables 3Cx 500 mm² - (RD-C-7/1)-Z9-C071-MV | 15d | 2026-10-11 | 2026-10-27 | RHD4PRSHLDOSMV1100, RHD4ENMSMV2000, RHD4ENMSMV2010, RHD4PRSHLSTAGMV1100, RHD4CZ9C071MV1100 |
| RHD4CZ9C071MV3200 |  | Joints Installation of Medium Voltage Cables 3Cx 500 mm² - (RD-C-7/1)-Z9-C071-MV | 3d | 2026-10-28 | 2026-10-31 | RHD4PRSHLDOSMV1300, RHD4PRSHLSTAGMV1300, RHD4CZ9C071MV3100 |
| RHD4CZ9C071MV3300 |  | Testing of Medium Voltage Cables 3Cx 500 mm² - (RD-C-7/1)-Z9-C071-MV | 5d | 2026-11-01 | 2026-11-05 | RHD4CZ9C071MV3200, RHD4CZ9C071MV2400 |
|  | 8795 | **RHD4-02-002-Z9-C071-Low Voltage Network - LV** |  | 2027-02-17 | 2027-03-28 |  |
|  | 8796 | **RHD4-02-002-C071-(LV)-Low Voltage duct banks** |  | 2027-02-17 | 2027-02-27 |  |
| RHD4CZ9C071LV2100 |  | Excavation of Duct Banks for Low Voltage Network - (RD-C-7/1)-Z9-C071-LV | 2d | 2027-02-17 | 2027-02-18 | RHD4ENSDZ9APPLV160, RHD4CZ9C071PT4500, RHD4CZ9C071MV2100 |
| RHD4CZ9C071LV2200 |  | Installation of Duct Banks for Low Voltage Network - (RD-C-7/1)-Z9-C071-LV | 2d | 2027-02-20 | 2027-02-21 | RHD4PRSHLDOSLV1000, RHD4PRSHLSTAGLV1000, RHD4CZ9C071LV2100 |
| RHD4CZ9C071LV2300 |  | Pouring of Duct Banks for Low Voltage Network - (RD-C-7/1)-Z9-C071-LV | 2d | 2027-02-23 | 2027-02-24 | RHD4CZ9C071LV2200 |
| RHD4CZ9C071LV2400 |  | Backfilling of Duct Banks for Low Voltage Network - (RD-C-7/1)-Z9-C071-LV | 2d | 2027-02-25 | 2027-02-27 | RHD4CZ9C071LV2300 |
|  | 8797 | **RHD4-02-002-C071-(LV)-Low Voltage Drawpit** |  | 2027-02-28 | 2027-03-03 |  |
| RHD4CZ9C071LV5100 |  | Excavation of Drawpit size 900x900x1000mm for Low Voltage Network - (RD-C-7/1)-Z9-C071-LV | 2d | 2027-02-28 | 2027-03-01 | RHD4ENSDZ9APPLV160, RHD4CZ9C071LV2400, RHD4CZ9C071MV1200 |
| RHD4CZ9C071LV5200 |  | Installation of Drawpit size 900x900x1000mm for Low Voltage Network - (RD-C-7/1)-Z9-C071-LV | 2d | 2027-03-02 | 2027-03-03 | RHD4PRSHLDOSLV1400, RHD4PRSHLSTAGLV1400, RHD4CZ9C071LV5100 |
|  | 8798 | **RHD4-02-002-C071-(LV)-Low Voltage cables** |  | 2027-03-04 | 2027-03-28 |  |
| RHD4CZ9C071LV3100 |  | Excavation for Low Voltage Cables for Low Voltage Network - (RD-C-7/1)-Z9-C071-LV | 2d | 2027-03-04 | 2027-03-06 | RHD4ENSDZ9APPLV160, RHD4CZ9C071LV5200, RHD4CZ3L122ICT5200 |
| RHD4CZ9C071LV3200 |  | Cable Laying of Low Voltage Cables for Low Voltage Network - (RD-C-7/1)-Z9-C071-LV | 6d | 2027-03-07 | 2027-03-16 | RHD4PRSHLDOSLV1100, RHD4ENMSLV2000, RHD4ENMSLV2010, RHD4PRSHLSTAGLV1100, RHD4CZ9C071LV3100 |
| RHD4CZ9C071LV3300 |  | Warning tape and Backfill for Low Voltage Cables for Low Voltage Network - (RD-C-7/1)-Z9-C071-LV | 6d | 2027-03-17 | 2027-03-23 | RHD4CZ9C071LV3200 |
| RHD4CZ9C071LV3400 |  | Testing of Low Voltage Cables for Low Voltage Network - (RD-C-7/1)-Z9-C071-LV | 4d | 2027-03-24 | 2027-03-28 | RHD4CZ9C071LV3300 |
|  | 8801 | **RHD4-02-002-Z9-C071-Street Lighting Network - SL** |  | 2027-04-27 | 2027-07-10 |  |
|  | 8802 | **RHD4-02-002-C071-(SL)-Street Lighting duct banks** |  | 2027-04-27 | 2027-05-20 |  |
| RHD4CZ9C071SL2100 |  | Excavation of Duct Banks for Street Lighting Network - (RD-C-7/1)-Z9-C071-SL | 5d | 2027-04-27 | 2027-05-02 | RHD4ENSDZ9APPSL170, RHD4CZ9C071LV2100, RHD4CTUN1Z5STG21490 |
| RHD4CZ9C071SL2200 |  | Installation of Duct Banks for Street Lighting Network - (RD-C-7/1)-Z9-C071-SL | 3d | 2027-05-03 | 2027-05-05 | RHD4PRSHLDOSSL1000, RHD4PRSHLSTAGSL1000, RHD4CZ9C071SL2100 |
| RHD4CZ9C071SL2300 |  | Pouring of Duct Banks for Street Lighting Network - (RD-C-7/1)-Z9-C071-SL | 5d | 2027-05-06 | 2027-05-11 | RHD4CZ9C071SL2200 |
| RHD4CZ9C071SL2400 |  | Backfilling of Duct Banks for Street Lighting Network - (RD-C-7/1)-Z9-C071-SL | 4d | 2027-05-12 | 2027-05-20 | RHD4CZ9C071SL2300 |
|  | 8803 | **RHD4-02-002-C071-(SL)-Street Lighting Drawpit** |  | 2027-05-12 | 2027-05-20 |  |
| RHD4CZ9C071SL5100 |  | Excavation of Drawpit size 600x600x900mm for Street Lighting Network - (RD-C-7/1)-Z9-C071-SL | 2d | 2027-05-12 | 2027-05-13 | RHD4ENSDZ9APPSL170, RHD4CZ9C071SL2300, RHD4CZ9C071LV3400 |
| RHD4CZ9C071SL5200 |  | Installation of Drawpit size 600x600x900mm for Street Lighting Network - (RD-C-7/1)-Z9-C071-SL | 2d | 2027-05-19 | 2027-05-20 | RHD4PRSHLDOSSL1400, RHD4PRSHLSTAGSL1400, RHD4CZ9C071SL5100 |
|  | 8804 | **RHD4-02-002-C071-(SL)-Street Lighting cables** |  | 2027-05-22 | 2027-06-16 |  |
| RHD4CZ9C071SL3100 |  | Excavation for Street Lighting Cables for Street Lighting Network - (RD-C-7/1)-Z9-C071-SL | 7d | 2027-05-22 | 2027-05-29 | RHD4ENSDZ9APPSL170, RHD4CZ9C071SL5200 |
| RHD4CZ9C071SL3200 |  | Cable Laying of Street Lighting Cables for Street Lighting Network - (RD-C-7/1)-Z9-C071-SL | 6d | 2027-05-30 | 2027-06-05 | RHD4PRSHLDOSSL1100, RHD4ENMSSL2000, RHD4ENMSSL2010, RHD4PRSHLSTAGSL1100, RHD4CZ9C071SL3100 |
| RHD4CZ9C071SL3300 |  | Warning tape and Backfill for Street Lighting Cables for Street Lighting Network - (RD-C-7/1)-Z9-C071-SL | 6d | 2027-06-06 | 2027-06-12 | RHD4CZ9C071SL3200 |
| RHD4CZ9C071SL3400 |  | Testing of Street Lighting Cables for Street Lighting Network - (RD-C-7/1)-Z9-C071-SL | 4d | 2027-06-13 | 2027-06-16 | RHD4CZ9C071SL3300 |
|  | 8805 | **RHD4-02-002-C071-(SL)-Street Lighting Poles** |  | 2027-06-17 | 2027-07-07 |  |
| RHD4CZ9C071SL1100 |  | Excavation for RC Base for Lighting Poles for Street Lighting Network - (RD-C-7/1)-Z9-C071-SL | 3d | 2027-06-17 | 2027-06-20 | RHD4ENSDZ9APPSL170, RHD4CZ9C071SL3400, RHD4CZ9C071SL2400 |
| RHD4CZ9C071SL1200 |  | Installation for RC Base for Lighting Poles for Street Lighting Network - (RD-C-7/1)-Z9-C071-SL | 3d | 2027-06-21 | 2027-06-23 | RHD4CZ9C071SL1100 |
| RHD4CZ9C071SL1300 |  | Backfill for RC Base for Lighting Poles for Street Lighting Network - (RD-C-7/1)-Z9-C071-SL | 3d | 2027-06-24 | 2027-06-27 | RHD4CZ9C071SL1200 |
| RHD4CZ9C071SL1400 |  | Installation for Lighting Poles for Street Lighting Network - (RD-C-7/1)-Z9-C071-SL | 4d | 2027-06-28 | 2027-07-01 | RHD4PRSHLDOSSL1200, RHD4ENMSSL2000, RHD4ENMSSL2010, RHD4PRSHLSTAGSL1200, RHD4CZ9C071SL1300 |
| RHD4CZ9C071SL1500 |  | Luminaire Installation for Lighting Poles for Street Lighting Network - (RD-C-7/1)-Z9-C071-SL | 5d | 2027-07-03 | 2027-07-07 | RHD4PRSHLDOSSL1300, RHD4PRSHLSTAGSL1300, RHD4CZ9C071SL1400 |
|  | 8806 | **RHD4-02-002-C071-(SL)-Street Lighting Feeder Pillars** |  |  |  |  |
|  | 8807 | **RHD4-02-002-C071-(SL)-Street Lighting Earthing System** |  | 2027-07-08 | 2027-07-10 |  |
| RHD4CZ9C071SL6100 |  | Installation of Earthing for Lighting Poles and Fedder Pillers for Street Lighting Network - (RD-C-7/1)-Z9-C071-SL | 2d | 2027-07-08 | 2027-07-10 | RHD4ENMSER2000, RHD4ENMSER2010, RHD4CZ9C071SL1500, RHD4CZ3L122LV5200 |
|  | 8813 | **RHD4-02-002-Z9-C071-Telecommunications Network - TC** |  | 2026-08-17 | 2027-09-29 |  |
|  | 8814 | **RHD4-02-002-C071-(TC)-Telecommunications Ducts** |  | 2027-07-11 | 2027-09-05 |  |
| RHD4CZ9C071TC2100 |  | Excavation of HDPE Ducts for Telecom Network - (RD-C-7/1)-Z9-C071-TC | 14d | 2027-07-11 | 2027-07-26 | RHD4ENSDZ9APPTC190, RHD4CZ9C071SL6100 |
| RHD4CZ9C071TC2200 |  | Installation of HDPE Ducts for Telecom Network - (RD-C-7/1)-Z9-C071-TC | 21d | 2027-07-27 | 2027-08-19 | RHD4PRSHLDOSTC1000, RHD4PRSHLSTAGTC1000, RHD4CZ9C071TC2100, RHD4CZ6A015RD7100 |
| RHD4CZ9C071TC2400 |  | Backfilling of HDPE Ducts for Telecom Network - (RD-C-7/1)-Z9-C071-TC | 14d | 2027-08-21 | 2027-09-05 | RHD4CZ9C071TC2200 |
|  | 8815 | **RHD4-02-002-C071-(TC)-Telecommunications Manholes** |  | 2027-09-08 | 2027-09-29 |  |
| RHD4CZ9C071TC5100 |  | Excavation for Manholes for Telecom Network - (RD-C-7/1)-Z9-C071-TC | 9d | 2027-09-08 | 2027-09-18 | RHD4ENSDZ9APPTC190, RHD4CZ9C071TC2400, RHD4CZ3C011SL6100, RHD4CZ1C081RD7100, RHD4CZ7C032RD7100, RHD4CZ7C032RD8100, RHD4CZ4L09RD7100, RHD4CZ5RA07RD9200 |
| RHD4CZ9C071TC5200 |  | Installation of Manholes for Telecom Network - (RD-C-7/1)-Z9-C071-TC | 9d | 2027-09-19 | 2027-09-29 | RHD4PRSHLDOSTC1200, RHD4PRSHLSTAGTC1200, RHD4CZ9C071TC5100, RHD4CZ3C011SL1500 |
|  | 8816 | **RHD4-02-002-C071-(TC)-Telecomminications Road Crossings** |  | 2026-08-17 | 2026-08-30 |  |
| RHD4CZ9C071TC3100 |  | Excavation for Road Crossings for Telecom Network - (RD-C-7/1)-Z9-C071-TC | 3d | 2026-08-17 | 2026-08-19 | RHD4ENSDZ9APPTC190, RHD4PRSHLDOSICT1000 |
| RHD4CZ9C071TC3200 |  | Installation of Road Crossings for Telecom Network - (RD-C-7/1)-Z9-C071-TC | 3d | 2026-08-20 | 2026-08-23 | RHD4PRSHLDOSTC1100, RHD4PRSHLSTAGTC1100, RHD4CZ9C071TC3100 |
| RHD4CZ9C071TC3300 |  | Pouring of Road Crossings for Telecom Network - (RD-C-7/1)-Z9-C071-TC | 3d | 2026-08-24 | 2026-08-26 | RHD4CZ9C071TC3200 |
| RHD4CZ9C071TC3400 |  | Backfilling of Road Crossings for Telecom Network - (RD-C-7/1)-Z9-C071-TC | 3d | 2026-08-27 | 2026-08-30 | RHD4CZ9C071TC3300 |
|  | 8817 | **RHD4-02-002-Z9-C071-Information and Communication Technologies - ICT** |  | 2026-08-17 | 2027-11-21 |  |
|  | 8818 | **RHD4-02-002-C071-(ICT)-Information and Communication Technologies Ducts** |  | 2027-09-30 | 2027-10-31 |  |
| RHD4CZ9C071ICT2100 |  | Excavation of HDPE Ducts for ICT Network - (RD-C-7/1)-Z9-C071-ICT | 9d | 2027-09-30 | 2027-10-10 | RHD4ENSDZ9APPICT200, RHD4CZ9C071TC5200, RHD4GNLVZ7FT1500, RHD4CZ7L03CCTV1500 |
| RHD4CZ9C071ICT2200 |  | Installation of HDPE Ducts for ICT Network - (RD-C-7/1)-Z9-C071-ICT | 9d | 2027-10-11 | 2027-10-20 | RHD4PRSHLDOSICT1000, RHD4PRSHLSTAGICT1000, RHD4CZ9C071ICT2100 |
| RHD4CZ9C071ICT2400 |  | Backfilling of HDPE Ducts for ICT Network - (RD-C-7/1)-Z9-C071-ICT | 9d | 2027-10-21 | 2027-10-31 | RHD4CZ9C071ICT2200 |
|  | 8819 | **RHD4-02-002-C071-(ICT)-Information and Communication Technologies Manholes** |  | 2027-11-01 | 2027-11-21 |  |
| RHD4CZ9C071ICT5100 |  | Excavation for Manholes for ICT Network - (RD-C-7/1)-Z9-C071-ICT | 9d | 2027-11-01 | 2027-11-10 | RHD4ENSDZ9APPICT200, RHD4CZ9C071ICT2400 |
| RHD4CZ9C071ICT5200 |  | Installation of Manholes for ICT Network - (RD-C-7/1)-Z9-C071-ICT | 9d | 2027-11-11 | 2027-11-21 | RHD4PRSHLDOSICT1200, RHD4PRSHLSTAGICT1200, RHD4CZ9C071ICT5100, RHD4CZ8A011RD8100 |
|  | 8820 | **RHD4-02-002-C071-(ICT)-Information and Communication Technologies Road Crossings** |  | 2026-08-17 | 2026-09-06 |  |
| RHD4CZ9C071ICT3100 |  | Excavation for Road Crossings for ICT Network - (RD-C-7/1)-Z9-C071-ICT | 4d | 2026-08-17 | 2026-08-20 | RHD4ENSDZ9APPICT200, RHD4PRSHLDOSICT1000 |
| RHD4CZ9C071ICT3200 |  | Installation of Road Crossings for ICT Network - (RD-C-7/1)-Z9-C071-ICT | 5d | 2026-08-22 | 2026-08-26 | RHD4PRSHLDOSICT1100, RHD4PRSHLSTAGICT1100, RHD4CZ9C071ICT3100 |
| RHD4CZ9C071ICT3300 |  | Pouring of Road Crossings for ICT Network - (RD-C-7/1)-Z9-C071-ICT | 5d | 2026-08-27 | 2026-09-01 | RHD4CZ9C071ICT3200 |

| ID | WBS | Task | Duration | Start | Finish | Predecessors |
| --- | --- | --- | --- | --- | --- | --- |
| RHD4CZ9C071ICT3400 |  | Backfilling of Road Crossings for ICT Network - (RD-C-7/1)-Z9-C071-ICT | 4d | 2026-09-02 | 2026-09-06 | RHD4CZ9C071ICT3300 |
|  | 8808 | **RHD4-02-002-Z9-C071-Landscape Network - LS** |  |  |  |  |
|  | 8809 | **RHD4-02-002-C071-(LS)-Landscape Lighting cables** |  |  |  |  |
|  | 8811 | **RHD4-02-002-C071-(LS)-Landscape Bollard Poles** |  |  |  |  |
|  | 8821 | **RHD4-02-002-Z9-C071-Security Network - CCTV** |  | 2027-11-23 | 2027-12-23 |  |
|  | 8822 | **RHD4-02-002-C071-(CCTV)-Civil Works** |  | 2027-11-23 | 2027-11-28 |  |
| RHD4CZ9C071CCTV2100 |  | Civil Works for Security Network - (RD-C-7/1)-Z9-C071-CCTV | 5d | 2027-11-23 | 2027-11-28 | RHD4CZ9C071ICT5200 SS, RHD4CZ8RA04RD9100 |
|  | 8823 | **RHD4-02-002-C071-(CCTV)-CCTV Poles** |  | 2027-11-29 | 2027-12-09 |  |
| RHD4CZ9C071CCTV1100 |  | Excavation for RC Base for CCTV Poles for Security Network - (RD-C-7/1)-Z9-C071-CCTV | 2d | 2027-11-29 | 2027-11-30 | RHD4ENSDZ9APPCCTV210, RHD4CZ9C071CCTV2100, RHD4HOASZ9APPLV160 |
| RHD4CZ9C071CCTV1200 |  | Installation for RC Base for CCTV Poles for Security Network - (RD-C-7/1)-Z9-C071-CCTV | 2d | 2027-12-01 | 2027-12-02 | RHD4CZ9C071CCTV1100 |
| RHD4CZ9C071CCTV1300 |  | Backfill for RC Base for CCTV Poles for Security Network - (RD-C-7/1)-Z9-C071-CCTV | 2d | 2027-12-04 | 2027-12-05 | RHD4CZ9C071CCTV1200 |
| RHD4CZ9C071CCTV1400 |  | Installation for CCTV Poles for Security Network - (RD-C-7/1)-Z9-C071-CCTV | 2d | 2027-12-06 | 2027-12-07 | RHD4PRSHLDOSCCTV1000, RHD4PRSHLSTACCTV1000, RHD4CZ9C071CCTV1300 |
| RHD4CZ9C071CCTV1500 |  | Protection post Installation for CCTV Poles for Security Network - (RD-C-7/1)-Z9-C071-CCTV | 2d | 2027-12-08 | 2027-12-09 | RHD4CZ9C071CCTV1400 |
|  | 8824 | **RHD4-02-002-C071-(CCTV)-Camera** |  | 2027-12-11 | 2027-12-12 |  |
| RHD4CZ9C071CCTV3100 |  | Installation for Cameras for Security Network - (RD-C-7/1)-Z9-C071-CCTV | 2d | 2027-12-11 | 2027-12-12 | RHD4PRSHLDOSCCTV1100, RHD4PRSHLSTACCTV1100, RHD4CZ9C071CCTV1500 |
|  | 8825 | **RHD4-02-002-C071-(CCTV)-Power and Infrastructure** |  | 2027-12-13 | 2027-12-14 |  |
| RHD4CZ9C071CCTV4100 |  | Installation of Power outlet, UPS and midspan for PTZ Camerafor Cameras for Security Network - (RD-C-7/1)-Z9-C071-CCTV | 2d | 2027-12-13 | 2027-12-14 | RHD4PRSHLDOSCCTV1300, RHD4PRSHLSTACCTV1300, RHD4CZ9C071CCTV3100 |
|  | 8827 | **RHD4-02-002-C071-(CCTV)-CCTV Panels and Components** |  | 2027-12-15 | 2027-12-23 |  |
| RHD4CZ9C071CCTV6100 |  | Installation for CCTV Panels for Security Network - (RD-C-7/1)-Z9-C071-CCTV | 8d | 2027-12-15 | 2027-12-23 | RHD4PRSHLDOSCCTV1200, RHD4PRSHLSTACCTV1200, RHD4PRLOLSTACCTV1001, RHD4CZ9C071CCTV4100 |
|  | 8838 | **RHD4-02-002-Z9-L05** |  | 2026-08-29 | 2027-04-17 |  |
|  | 8869 | **RHD4-02-002-Z9-L05-Crossings Sewage Network - SWCr** |  |  |  |  |
|  | 8874 | **RHD4-02-002-L05-(SWCr)-GRP Pipes - 700 mm diameter** |  |  |  |  |
|  | 8881 | **RHD4-02-002-L05-(SWCr)-MH Works - 1500 mm diameter** |  |  |  |  |
|  | 8913 | **RHD4-02-002-Z9-L05-Crossings Potable Network - PTCr** |  |  |  |  |
|  | 8915 | **RHD4-02-002-L05-(PTCr)-HDPE Pipes - 160 mm diameter** |  |  |  |  |
|  | 8919 | **RHD4-02-002-L05-(PTCr)-Gate Valves (Direct Buried)** |  |  |  |  |
|  | 8960 | **RHD4-02-002-Z9-L05-Crossings Irrigation Network - IRRC** |  |  |  |  |
|  | 8968 | **RHD4-02-002-L05-(IRRC)-HDPE Pipes - 500 mm diameter** |  |  |  |  |
|  | 8970 | **RHD4-02-002-L05-(IRRC)-Butterfly Valve Chamber** |  |  |  |  |
|  | 8971 | **RHD4-02-002-L05-(IRRC)-Butterfly Valves** |  |  |  |  |
|  | 9017 | **RHD4-02-002-Z9-L05-Road Works - RD** |  | 2026-09-12 | 2027-04-17 |  |
|  | 9018 | **RHD4-02-002-L05-(RD)-Subgrade** |  | 2026-09-12 | 2026-09-13 |  |
| RHD4CZ9L05RD1100 |  | Supply, lay and compaction subgrade compacted thickness 300 mm for Roads - (RD-L-5)-Z9-L05-RD | 2d | 2026-09-12 | 2026-09-13 | RHD4ENSDZ9APPEW100, RHD4ENSDZ9APPRD220, RHD4CZ9L05ST7500 |
|  | 9019 | **RHD4-02-002-L05-(RD)-Aggregate Base Course** |  | 2026-09-14 | 2026-09-15 |  |
| RHD4CZ9L05RD2100 |  | Supply, lay and compaction Aggregate base course compacted thickness 300 mmfor Roads - (RD-L-5)-Z9-L05-RD | 2d | 2026-09-14 | 2026-09-15 | RHD4PRSHLDOSRD1000, RHD4PRSHLSTAGRD1000, RHD4CZ9L05RD1100 |
|  | 9020 | **RHD4-02-002-L05-(RD)-Bituminous base course Two Layers, including (MC1)&(RC2)** |  | 2026-09-16 | 2027-03-29 |  |
| RHD4CZ9L05RD3100 |  | Supply, lay and Asphaltic base course including Prime Coat (MC1) for 1st Layer - (RD-L-5)-Z9-L05-RD | 2d | 2026-09-16 | 2026-09-17 | RHD4PRSHLDOSRD1100, RHD4ENMSASPH2000, RHD4ENMSASPH2010, RHD4PRSHLSTAGRD1100, RHD4CZ9L05RD2100 |
| RHD4CZ9L05RD3200 |  | Supply, lay and Asphaltic base course including Tack Coat (RC2) for 2nd Layer - (RD-L-5)-Z9-L05-RD | 2d | 2027-03-28 | 2027-03-29 | RHD4PRSHLDOSRD1100, RHD4PRSHLSTAGRD1100, RHD4CZ9L05ICT2400 |
|  | 9022 | **RHD4-02-002-L05-(RD)-Precast Concrete Curb** |  | 2027-03-30 | 2027-03-31 |  |
| RHD4CZ9L05RD5100 |  | Supply and installation Precast Concrete Kerb for Roads - (RD-L-5)-Z9-L05-RD | 2d | 2027-03-30 | 2027-03-31 | RHD4PRSHLDOSRD1200, RHD4ENMSRD2000, RHD4ENMSRD2010, RHD4PRSHLSTAGRD1200, RHD4CZ9L05RD3200 |
|  | 9025 | **RHD4-02-002-L05-(RD)-Traffic Signage** |  | 2027-04-01 | 2027-04-04 |  |
| RHD4CZ9L05RD8100 |  | Installation of Traffic Signage for Road Network - (RD-L-5)-Z9-L05-RD | 3d | 2027-04-01 | 2027-04-04 | RHD4PRSHLDOSRD1600, RHD4PRSHLSTAGRD1600, RHD4CZ9L05RD5100 |
|  | 9023 | **RHD4-02-002-L05-(RD)-Precast Interlocking Block Pavers** |  | 2027-04-05 | 2027-04-06 |  |
| RHD4CZ9L05RD6100 |  | Interlocking block pavers for sidewalk-footpath for Side walks and Parking areas - (RD-L-5)-Z9-L05-RD | 2d | 2027-04-05 | 2027-04-06 | RHD4PRSHLDOSRD1300, RHD4PRSHLDOSRD1400, RHD4ENMSRD2000, RHD4ENMSRD2010, RHD4PRSHLSTAGRD1300, RHD4PRSHLSTAGRD1400, RHD4CZ9L05RD8100 |
|  | 9021 | **RHD4-02-002-L05-(RD)-Bituminous concrete wearing course including tack coat (RC2)** |  | 2027-04-07 | 2027-04-08 |  |
| RHD4CZ9L05RD4100 |  | Supply, lay and compaction Asphaltic wearing course including tack Coat (RC2)for Road Network - (RD-L-5)-Z9-L05-RD | 2d | 2027-04-07 | 2027-04-08 | RHD4CZ9L05RD5100, RHD4CZ9L05RD6100 |
|  | 9024 | **RHD4-02-002-L05-(RD)-Pavement Marking** |  | 2027-04-10 | 2027-04-17 |  |
| RHD4CZ9L05RD7100 |  | Pavement Markings for Road Network - (RD-L-5)-Z9-L05-RD | 7d | 2027-04-10 | 2027-04-17 | RHD4PRSHLDOSRD1500, RHD4PRSHLSTAGRD1500, RHD4CZ9L05RD4100 |
|  | 8842 | **RHD4-02-002-Z9-L05-Storm Network - ST** |  | 2026-11-25 | 2027-01-17 |  |
|  | 8859 | **RHD4-02-002-L05-(ST)-MH Works - 1200 mm diameter** |  | 2026-12-02 | 2027-01-17 |  |
| RHD4CZ9L05ST3100 |  | Excavation and PC Blinding works for MH 1200 mm - (RD-L-5)-Z9-L05-ST | 2d | 2026-12-02 | 2026-12-03 | RHD4ENSDZ9APPST110, RHD4ENMSST2000, RHD4ENMSST2010, RHD4CZ9L05ST2100 |
| RHD4CZ9L05ST3200 |  | Installation of Base for MH 1200 mm - (RD-L-5)-Z9-L05-ST | 2d | 2026-12-05 | 2026-12-06 | RHD4PRSHLSTAGST1608, RHD4CZ9L05ST3100 |
| RHD4CZ9L05ST3300 |  | MH Ring and C.Slab works and Backfilling works for MH 1200 mm - (RD-L-5)-Z9-L05-ST | 2d | 2026-12-07 | 2026-12-08 | RHD4PRSHLDOSST1608, RHD4CZ9L05ST3200 |
| RHD4CZ9L05ST3400 |  | Steel Cover for MH 1200 mm - (RD-L-5)-Z9-L05-ST | 2d | 2027-01-13 | 2027-01-14 | RHD4PRSHLDOSST1708, RHD4PRSHLSTAGST1708, RHD4CZ9L05ST3300, RHD4CZ9L05ST2500, RHD4CZ9L05PT4400, RHD4CZ9C071ST3401 |
| RHD4CZ9L05ST3500 |  | Finishing, Benching, Testing works for MH 1200 mm - (RD-L-5)-Z9-L05-ST | 2d | 2027-01-16 | 2027-01-17 | RHD4CZ9L05ST3400, RHD4CZ9C071ST3501 |
|  | 8845 | **RHD4-02-002-L05-(ST)-GRP Pipes - 600 mm diameter** |  | 2026-11-25 | 2026-12-06 |  |
| RHD4CZ9L05ST1102 |  | Excavation works for GRP Pipe Line 600 mm - (RD-L-5)-Z9-L05-ST | 2d | 2026-11-25 | 2026-11-26 | RHD4ENSDZ9APPST110, RHD4CZ9L05RW3000, RHD4CZ9L02ST1508 |
| RHD4CZ9L05ST1202 |  | Bedding works for GRP Pipe Line 600 mm - (RD-L-5)-Z9-L05-ST | 2d | 2026-11-28 | 2026-11-29 | RHD4CZ9L05ST1102 |
| RHD4CZ9L05ST1302 |  | Installing for GRP Pipe Line 600 mm - (RD-L-5)-Z9-L05-ST | 2d | 2026-11-30 | 2026-12-01 | RHD4PRSHLSTAGST1008, RHD4CZ9L05ST1202, RHD4PRSHLDOSST1608, RHD4PRSHLPOST1000, RHD4PRSHLDOSST1008, RHD4PRSHLDOSST1604, RHD4PRSHLDOSST1004 |
| RHD4CZ9L05ST1402 |  | Primary Test for GRP Pipe Line 600 mm - (RD-L-5)-Z9-L05-ST | 2d | 2026-12-02 | 2026-12-03 | RHD4CZ9L05ST1302 |
| RHD4CZ9L05ST1502 |  | Backfilling and warning tape works for GRP Pipe Line 600 mm - (RD-L-5)-Z9-L05-ST | 2d | 2026-12-05 | 2026-12-06 | RHD4CZ9L05ST1402 |
|  | 8844 | **RHD4-02-002-L05-(ST)-GRP Pipes - 500 mm diameter** |  | 2026-11-28 | 2026-12-08 |  |
| RHD4CZ9L05ST1101 |  | Excavation works for GRP Pipe Line 500 mm - (RD-L-5)-Z9-L05-ST | 2d | 2026-11-28 | 2026-11-29 | RHD4ENSDZ9APPST110, RHD4CZ9L05ST1102 |
| RHD4CZ9L05ST1201 |  | Bedding works for GRP Pipe Line 500 mm - (RD-L-5)-Z9-L05-ST | 2d | 2026-11-30 | 2026-12-01 | RHD4CZ9L05ST1101 |
| RHD4CZ9L05ST1301 |  | Installing for GRP Pipe Line 500 mm - (RD-L-5)-Z9-L05-ST | 2d | 2026-12-02 | 2026-12-03 | RHD4PRSHLSTAGST1008, RHD4CZ9L05ST1201, RHD4CZ9L05ST1302, RHD4PRSHLDOSST1608, RHD4PRSHLPOST1000, RHD4PRSHLDOSST1008, RHD4PRSHLDOSST1604, RHD4PRSHLDOSST1004 |
| RHD4CZ9L05ST1401 |  | Primary Test for GRP Pipe Line 500 mm - (RD-L-5)-Z9-L05-ST | 2d | 2026-12-05 | 2026-12-06 | RHD4CZ9L05ST1301 |
| RHD4CZ9L05ST1501 |  | Backfilling and warning tape works for GRP Pipe Line 500 mm - (RD-L-5)-Z9-L05-ST | 2d | 2026-12-07 | 2026-12-08 | RHD4CZ9L05ST1401, RHD4CZ9L05ST1502 |
|  | 8857 | **RHD4-02-002-L05-(ST)-UPVC Pipes - 300 mm diameter** |  | 2026-11-30 | 2026-12-10 |  |
| RHD4CZ9L05ST2100 |  | Excavation works for UPVC Pipe Line 300 mm - (RD-L-5)-Z9-L05-ST | 2d | 2026-11-30 | 2026-12-01 | RHD4ENSDZ9APPST110, RHD4CZ9L05ST1101 |
| RHD4CZ9L05ST2200 |  | Bedding works for UPVC Pipe Line 300 mm - (RD-L-5)-Z9-L05-ST | 2d | 2026-12-02 | 2026-12-03 | RHD4CZ9L05ST2100 |

| ID | WBS | Task | Duration | Start | Finish | Predecessors |
| --- | --- | --- | --- | --- | --- | --- |
| RHD4CZ9L05ST2300 |  | Installing for UPVC Pipe Line 300 mm - (RD-L-5)-Z9-L05-ST | 2d | 2026-12-05 | 2026-12-06 | RHD4PRSHLDOSST1108, RHD4PRSHLSTAGST1108, RHD4CZ9L05ST2200, RHD4CZ9L05ST7300 |
| RHD4CZ9L05ST2400 |  | Primary Test for UPVC Pipe Line 300 mm - (RD-L-5)-Z9-L05-ST | 2d | 2026-12-07 | 2026-12-08 | RHD4CZ9L05ST2300 |
| RHD4CZ9L05ST2500 |  | Backfilling and warning tape works for UPVC Pipe Line 300 mm - (RD-L-5)-Z9-L05-ST | 2d | 2026-12-09 | 2026-12-10 | RHD4CZ9L05ST2400, RHD4CZ9L05ST6100, RHD4CZ9L05ST1501 |
|  | 8865 | **RHD4-02-002-L05-(ST)-Concrete Encasement** |  | 2026-12-05 | 2026-12-06 |  |
| RHD4CZ9L05ST6100 |  | Pipe Encasement for Storm Pipelines - (RD-L-5)-Z9-L05-ST | 2d | 2026-12-05 | 2026-12-06 | RHD4CZ9L05ST2300 SS, RHD4CZ9L05ST2300 FF, RHD4CZ9L05ST2200 |
|  | 8866 | **RHD4-02-002-Z9-L05-Catch Basin - ST** |  | 2026-08-29 | 2026-09-10 |  |
|  | 8867 | **RHD4-02-002-L05-(ST)-Single Catch Basin Works** |  | 2026-08-29 | 2026-09-10 |  |
| RHD4CZ9L05ST7100 |  | Excavation works for Single Catch Basin - (RD-L-5)-Z9-L05-ST | 2d | 2026-08-29 | 2026-08-30 | RHD4ENSDZ9APPST110, RHD4PRSHLDOSST1308 |
| RHD4CZ9L05ST7200 |  | PC Blinding, Installation and Pipe connection for Single Catch Basin - (RD-L-5)-Z9-L05-ST | 2d | 2026-08-31 | 2026-09-01 | RHD4CZ9L05ST7100 |
| RHD4CZ9L05ST7300 |  | Rings & C.Slab & Final Backfill for Single Catch Basin - (RD-L-5)-Z9-L05-ST | 2d | 2026-09-05 | 2026-09-06 | RHD4PRSHLDOSST1308, RHD4PRSHLSTAGST1308, RHD4CZ9L05ST7200 |
| RHD4CZ9L05ST7400 |  | Steel Cover for Single Catch Basin - (RD-L-5)-Z9-L05-ST | 2d | 2026-09-07 | 2026-09-08 | RHD4PRSHLDOSST1708, RHD4CZ9L05ST7300 |
| RHD4CZ9L05ST7500 |  | Finishing and Insulation works for Single Catch Basin - (RD-L-5)-Z9-L05-ST | 2d | 2026-09-09 | 2026-09-10 | RHD4CZ9L05ST7400 |
|  | 8891 | **RHD4-02-002-Z9-L05-Sewage Network - SW** |  | 2026-12-12 | 2027-01-05 |  |
|  | 8896 | **RHD4-02-002-L05-(SW)-GRP Pipes - 700 mm diameter** |  |  |  |  |
|  | 1895 | **RHD4-02-002-L05-(SW)-GRP Pipes - 500 mm diameter** |  | 2026-12-12 | 2026-12-22 |  |
| RHD4CZ9L05SW1102 |  | Excavation works for GRP Pipe Line 500 mm - (RD-L-5)-Z9-L05-SW | 2d | 2026-12-12 | 2026-12-13 | RHD4CZ9L05ST2500 |
| RHD4CZ9L05SW1202 |  | Bedding works for GRP Pipe Line 500 mm - (RD-L-5)-Z9-L05-SW | 2d | 2026-12-14 | 2026-12-15 | RHD4CZ9L05SW1102 |
| RHD4CZ9L05SW1302 |  | Installing for GRP Pipe Line 500 mm - (RD-L-5)-Z9-L05-SW | 2d | 2026-12-16 | 2026-12-17 | RHD4CZ9L05SW1202 |
| RHD4CZ9L05SW1402 |  | Primary Test for GRP Pipe Line 500 mm - (RD-L-5)-Z9-L05-SW | 2d | 2026-12-19 | 2026-12-20 | RHD4CZ9L05SW1302 |
| RHD4CZ9L05SW1502 |  | Backfilling and warning tape works for GRP Pipe Line 500 mm - (RD-L-5)-Z9-L05-SW | 2d | 2026-12-21 | 2026-12-22 | RHD4CZ9L05SW1402 |
|  | 3794 | **RHD4-02-002-L05-(SW)-MH Works - 1200 mm diameter** |  | 2026-12-14 | 2027-01-05 |  |
| RHD4CZ9L05SW3100 |  | Excavation and PC Blinding works for MH 1200 mm - (RD-L-5)-Z9-L05-SW | 3d | 2026-12-14 | 2026-12-16 | RHD4CZ9L05SW1102 |
| RHD4CZ9L05SW3200 |  | Installation of Base for MH 1200 mm - (RD-L-5)-Z9-L05-SW | 5d | 2026-12-17 | 2026-12-22 | RHD4CZ9L05SW3100 |
| RHD4CZ9L05SW3300 |  | MH Ring and C.Slab works and Backfilling works for MH 1200 mm - (RD-L-5)-Z9-L05-SW | 5d | 2026-12-23 | 2026-12-28 | RHD4CZ9L05SW3200 |
| RHD4CZ9L05SW3400 |  | Steel Cover for MH 1200 mm - (RD-L-5)-Z9-L05-SW | 2d | 2026-12-29 | 2026-12-30 | RHD4CZ9L05SW3300 |
| RHD4CZ9L05SW3500 |  | Finishing, Benching, Testing works for MH 1200 mm - (RD-L-5)-Z9-L05-SW | 5d | 2026-12-31 | 2027-01-05 | RHD4CZ9L05SW3400 |
|  | 8903 | **RHD4-02-002-L05-(SW)-MH Works - 1500 mm diameter** |  |  |  |  |
|  | 8900 | **RHD4-02-002-L05-(SW)-Concrete Encasement** |  |  |  |  |
|  | 8928 | **RHD4-02-002-Z9-L05-Potable Network - PT** |  | 2026-12-23 | 2027-01-14 |  |
|  | 8930 | **RHD4-02-002-L05-(PT)-HDPE Pipes - 160 mm diameter** |  | 2026-12-23 | 2027-01-03 |  |
| RHD4CZ9L05PT1101 |  | Excavation works for HDPE Pipline 160 mm - (RD-L-5)-Z9-L05-PT | 2d | 2026-12-23 | 2026-12-24 | RHD4ENSDZ9APPPT130, RHD4ENMSPT2000, RHD4CZ9L05SW1502 |
| RHD4CZ9L05PT1201 |  | Bedding works for HDPE Pipline 160 mm - (RD-L-5)-Z9-L05-PT | 2d | 2026-12-26 | 2026-12-27 | RHD4CZ9L05PT1101 |
| RHD4CZ9L05PT1301 |  | Installing for HDPE Pipline 160 mm - (RD-L-5)-Z9-L05-PT | 2d | 2026-12-28 | 2026-12-29 | RHD4PRSHLDOSPT1000, RHD4PRSHLSTAGPT1000, RHD4CZ9L05PT1201 |
| RHD4CZ9L05PT1401 |  | Primary Test for HDPE Pipline 160 mm - (RD-L-5)-Z9-L05-PT | 2d | 2026-12-30 | 2026-12-31 | RHD4CZ9L05PT1301 |
| RHD4CZ9L05PT1501 |  | Backfilling and warning tape works for HDPE Pipline 160 mm - (RD-L-5)-Z9-L05-PT | 2d | 2027-01-02 | 2027-01-03 | RHD4CZ9L05PT1401 |
|  | 6483 | **RHD4-02-002-L05-(PT)-Concrete Encasement** |  | 2026-12-28 | 2026-12-29 |  |
| RHD4CZ9L05PT5100 |  | Pipe Encasement for Potable Pipelines - (RD-L-5)-Z9-L05-PT | 2d | 2026-12-28 | 2026-12-29 | RHD4CZ9L05PT1201 |
|  | 8939 | **RHD4-02-002-L05-(PT)-Air Valve Chambers** |  | 2026-12-26 | 2027-01-03 |  |
| RHD4CZ9L05PT2102 |  | Excavation and Bedding for Air Valve Chambers for Potable Water Network - (RD-L-5)-Z9-L05-PT | 2d | 2026-12-26 | 2026-12-27 | RHD4ENSDZ9APPPT130, RHD4CZ9L05PT1101 |
| RHD4CZ9L05PT2202 |  | PC works for Air Valve Chambers for Potable Water Network - (RD-L-5)-Z9-L05-PT | 2d | 2026-12-28 | 2026-12-29 | RHD4CZ9L05PT2102 |
| RHD4CZ9L05PT2302 |  | Installation for Air Valve Chambers for Potable Water Network - (RD-L-5)-Z9-L05-PT | 2d | 2026-12-30 | 2026-12-31 | RHD4PRSHLDOSPT1100, RHD4PRSHLDOSPT1400, RHD4PRSHLSTAGPT1100, RHD4PRSHLSTAGPT1400, RHD4CZ9L05PT2202 |
| RHD4CZ9L05PT2402 |  | Backfilling works for Air Valve Chambers for Potable Water Network - (RD-L-5)-Z9-L05-PT | 2d | 2027-01-02 | 2027-01-03 | RHD4CZ9L05PT2302 |
|  | 8940 | **RHD4-02-002-L05-(PT)-Air Valves** |  | 2026-12-30 | 2027-01-03 |  |
| RHD4CZ9L05PT3103 |  | Installation for Air Valves for Potable Water Network - (RD-L-5)-Z9-L05-PT | 2d | 2026-12-30 | 2026-12-31 | RHD4PRSHLDOSPT1200, RHD4PRSHLSTAGPT1200, RHD4CZ9L05PT1301 |
| RHD4CZ9L05PT3203 |  | Stem and Service box for Air Valves for Potable Water Network - (RD-L-5)-Z9-L05-PT | 2d | 2027-01-02 | 2027-01-03 | RHD4PRSHLDOSPT1300, RHD4PRSHLSTAGPT1300, RHD4CZ9L05PT3103 |
|  | 8941 | **RHD4-02-002-L05-(PT)-Fire Hydrant** |  | 2027-01-04 | 2027-01-14 |  |
| RHD4CZ9L05PT4100 |  | Excavation and Bedding and Pipe Installation for Fire Hydrant - (RD-L-5)-Z9-L05-PT | 2d | 2027-01-04 | 2027-01-05 | RHD4ENSDZ9APPPT130, RHD4CZ9L05PT1501 |
| RHD4CZ9L05PT4200 |  | Valve Installation for Fire Hydrant - (RD-L-5)-Z9-L05-PT | 2d | 2027-01-06 | 2027-01-07 | RHD4CZ9L05PT4100 |
| RHD4CZ9L05PT4300 |  | Stem for Fire Hydrant - (RD-L-5)-Z9-L05-PT | 2d | 2027-01-09 | 2027-01-10 | RHD4CZ9L05PT4200 |
| RHD4CZ9L05PT4400 |  | Fire Installation for Fire Hydrant - (RD-L-5)-Z9-L05-PT | 2d | 2027-01-11 | 2027-01-12 | RHD4PRSHLDOSPT1500, RHD4PRSHLSTAGPT1500, RHD4CZ9L05PT4300 |
| RHD4CZ9L05PT4500 |  | Protection Barriers for Fire Hydrant - (RD-L-5)-Z9-L05-PT | 2d | 2027-01-13 | 2027-01-14 | RHD4CZ9L05PT4400 |
|  | 8934 | **RHD4-02-002-L05-(PT)-Gate Valves (Direct Buried)** |  | 2026-12-28 | 2027-01-05 |  |
| RHD4CZ9L05PT3100 |  | Installation for Direct Buried Gate Valves - (RD-L-5)-Z9-L05-PT | 2d | 2026-12-28 | 2026-12-29 | RHD4PRSHLDOSPT1200, RHD4PRSHLSTAGPT1200, RHD4CZ9L05PT1301 FF, RHD4CZ9L05PT1301 SS |
| RHD4CZ9L05PT3200 |  | Stem and Service box for Direct Buried Gate Valves - (RD-L-5)-Z9-L05-PT | 2d | 2027-01-04 | 2027-01-05 | RHD4PRSHLDOSPT1300, RHD4PRSHLSTAGPT1300, RHD4CZ9L05PT3100, RHD4CZ9L05PT1501 |
|  | 8943 | **RHD4-02-002-Z9-L05-Irrigation Network - IRR** |  | 2027-01-04 | 2027-01-14 |  |
|  | 8951 | **RHD4-02-002-L05-(IRR)-HDPE Pipes - 500 mm diameter** |  | 2027-01-04 | 2027-01-14 |  |
| RHD4CZ9L05IRR1107 |  | Excavation works for HDPE Pipline 500 mm - (RD-L-5)-Z9-L05-IRR | 2d | 2027-01-04 | 2027-01-05 | RHD4ENSDZ9APPIRR140, RHD4ENMSRR2000, RHD4CZ9L05PT1501 |
| RHD4CZ9L05IRR1207 |  | Bedding works for HDPE Pipline 500 mm - (RD-L-5)-Z9-L05-IRR | 2d | 2027-01-06 | 2027-01-07 | RHD4CZ9L05IRR1107 |
| RHD4CZ9L05IRR1307 |  | Installing for HDPE Pipline 500 mm - (RD-L-5)-Z9-L05-IRR | 2d | 2027-01-09 | 2027-01-10 | RHD4PRSHLDOSIRR1000, RHD4PRSHLSTAGIRR1000, RHD4CZ9L05IRR1207 |
| RHD4CZ9L05IRR1407 |  | Primary Test for HDPE Pipline 500 mm - (RD-L-5)-Z9-L05-IRR | 2d | 2027-01-11 | 2027-01-12 | RHD4CZ9L05IRR1307 |
| RHD4CZ9L05IRR1507 |  | Backfilling and warning tape works for HDPE Pipline 500 mm - (RD-L-5)-Z9-L05-IRR | 2d | 2027-01-13 | 2027-01-14 | RHD4CZ9L05IRR1407 |
|  | 8977 | **RHD4-02-002-Z9-L05-Medium Voltage Network - MV** |  | 2026-09-19 | 2026-09-28 |  |
|  | 8978 | **RHD4-02-002-L05-(MV)-Medium Voltage cable trench** |  |  |  |  |
|  | 8979 | **RHD4-02-002-L05-(MV)-Medium Voltage duct banks** |  | 2026-09-19 | 2026-09-28 |  |
| RHD4CZ9L05MV2100 |  | Excavation of Duct Banks for Medium Voltage Network - (RD-L-5)-Z9-L05-MV | 2d | 2026-09-19 | 2026-09-20 | RHD4ENSDZ9APPMV150, RHD4CZ9L05RD3100 |
| RHD4CZ9L05MV2200 |  | Installation of Duct Banks for Medium Voltage Network - (RD-L-5)-Z9-L05-MV | 2d | 2026-09-21 | 2026-09-22 | RHD4PRSHLDOSMV1000, RHD4PRSHLSTAGMV1000, RHD4CZ9L05MV2100 |
| RHD4CZ9L05MV2300 |  | Pouring of Duct Banks for Medium Voltage Network - (RD-L-5)-Z9-L05-MV | 2d | 2026-09-24 | 2026-09-26 | RHD4CZ9L05MV2200 |
| RHD4CZ9L05MV2400 |  | Backfilling of Duct Banks for Medium Voltage Network - (RD-L-5)-Z9-L05-MV | 2d | 2026-09-27 | 2026-09-28 | RHD4CZ9L05MV2300 |
|  | 8980 | **RHD4-02-002-L05-(MV)-Medium Voltage cables 3Cx 500 mm²** |  | 2026-09-19 | 2026-09-22 |  |
| RHD4CZ9L05MV3100 |  | Installation of Medium Voltage Cables 3Cx 500 mm² - (RD-L-5)-Z9-L05-MV | 2d | 2026-09-19 | 2026-09-20 | RHD4PRSHLDOSMV1100, RHD4ENMSMV2000, RHD4ENMSMV2010, RHD4PRSHLSTAGMV1100, RHD4CZ9L05RD3100 |

| ID | WBS | Task | Duration | Start | Finish | Predecessors |
| --- | --- | --- | --- | --- | --- | --- |
| RHD4CZ9L05MV3300 |  | Testing of Medium Voltage Cables 3Cx 500 mm² - (RD-L-5)-Z9-L05-MV | 2d | 2026-09-21 | 2026-09-22 | RHD4CZ9L05MV3100 |
|  | 8984 | **RHD4-02-002-Z9-L05-Low Voltage Network - LV** |  | 2027-01-16 | 2027-01-28 |  |
|  | 8985 | **RHD4-02-002-L05-(LV)-Low Voltage duct banks** |  |  |  |  |
|  | 8987 | **RHD4-02-002-L05-(LV)-Low Voltage cables** |  | 2027-01-16 | 2027-01-28 |  |
| RHD4CZ9L05LV3100 |  | Excavation for Low Voltage Cables for Low Voltage Network - (RD-L-5)-Z9-L05-LV | 4d | 2027-01-16 | 2027-01-19 | RHD4ENSDZ9APPLV160, RHD4CZ9L05MV3300, RHD4CZ9L05IRR1507 |
| RHD4CZ9L05LV3200 |  | Cable Laying of Low Voltage Cables for Low Voltage Network - (RD-L-5)-Z9-L05-LV | 3d | 2027-01-20 | 2027-01-23 | RHD4PRSHLDOSLV1100, RHD4ENMSLV2000, RHD4ENMSLV2010, RHD4PRSHLSTAGLV1100, RHD4CZ9L05LV3100 |
| RHD4CZ9L05LV3300 |  | Warning tape and Backfill for Low Voltage Cables for Low Voltage Network - (RD-L-5)-Z9-L05-LV | 3d | 2027-01-24 | 2027-01-26 | RHD4CZ9L05LV3200 |
| RHD4CZ9L05LV3400 |  | Testing of Low Voltage Cables for Low Voltage Network - (RD-L-5)-Z9-L05-LV | 2d | 2027-01-27 | 2027-01-28 | RHD4CZ9L05LV3300 |
|  | 8990 | **RHD4-02-002-Z9-L05-Street Lighting Network - SL** |  | 2027-01-04 | 2027-02-28 |  |
|  | 8991 | **RHD4-02-002-L05-(SL)-Street Lighting duct banks** |  | 2027-01-04 | 2027-01-12 |  |
| RHD4CZ9L05SL2100 |  | Excavation of Duct Banks for Street Lighting Network - (RD-L-5)-Z9-L05-SL | 2d | 2027-01-04 | 2027-01-05 | RHD4ENSDZ9APPSL170, RHD4CZ9L05IRR1107 SS, RHD4CZ9L05MV2400 |
| RHD4CZ9L05SL2200 |  | Installation of Duct Banks for Street Lighting Network - (RD-L-5)-Z9-L05-SL | 2d | 2027-01-06 | 2027-01-07 | RHD4PRSHLDOSSL1000, RHD4PRSHLSTAGSL1000, RHD4CZ9L05SL2100 |
| RHD4CZ9L05SL2300 |  | Pouring of Duct Banks for Street Lighting Network - (RD-L-5)-Z9-L05-SL | 2d | 2027-01-09 | 2027-01-10 | RHD4CZ9L05SL2200 |
| RHD4CZ9L05SL2400 |  | Backfilling of Duct Banks for Street Lighting Network - (RD-L-5)-Z9-L05-SL | 2d | 2027-01-11 | 2027-01-12 | RHD4CZ9L05SL2300 |
|  | 8992 | **RHD4-02-002-L05-(SL)-Street Lighting Drawpit** |  | 2027-01-30 | 2027-02-02 |  |
| RHD4CZ9L05SL5100 |  | Excavation of Drawpit size 600x600x900mm for Street Lighting Network - (RD-L-5)-Z9-L05-SL | 2d | 2027-01-30 | 2027-01-31 | RHD4ENSDZ9APPSL170, RHD4CZ9L05SL2300, RHD4CZ9L05LV3400 |
| RHD4CZ9L05SL5200 |  | Installation of Drawpit size 600x600x900mm for Street Lighting Network - (RD-L-5)-Z9-L05-SL | 2d | 2027-02-01 | 2027-02-02 | RHD4PRSHLDOSSL1400, RHD4PRSHLSTAGSL1400, RHD4CZ9L05SL5100 |
|  | 8993 | **RHD4-02-002-L05-(SL)-Street Lighting cables** |  | 2027-02-03 | 2027-02-13 |  |
| RHD4CZ9L05SL3100 |  | Excavation for Street Lighting Cables for Street Lighting Network - (RD-L-5)-Z9-L05-SL | 3d | 2027-02-03 | 2027-02-06 | RHD4ENSDZ9APPSL170, RHD4CZ9L05SL5200 |
| RHD4CZ9L05SL3200 |  | Cable Laying of Street Lighting Cables for Street Lighting Network - (RD-L-5)-Z9-L05-SL | 2d | 2027-02-07 | 2027-02-08 | RHD4PRSHLDOSSL1100, RHD4ENMSSL2000, RHD4ENMSSL2010, RHD4PRSHLSTAGSL1100, RHD4CZ9L05SL3100 |
| RHD4CZ9L05SL3300 |  | Warning tape and Backfill for Street Lighting Cables for Street Lighting Network - (RD-L-5)-Z9-L05-SL | 2d | 2027-02-09 | 2027-02-10 | RHD4CZ9L05SL3200 |
| RHD4CZ9L05SL3400 |  | Testing of Street Lighting Cables for Street Lighting Network - (RD-L-5)-Z9-L05-SL | 2d | 2027-02-11 | 2027-02-13 | RHD4CZ9L05SL3300 |
|  | 8994 | **RHD4-02-002-L05-(SL)-Street Lighting Poles** |  | 2027-02-14 | 2027-02-25 |  |
| RHD4CZ9L05SL1100 |  | Excavation for RC Base for Lighting Poles for Street Lighting Network - (RD-L-5)-Z9-L05-SL | 2d | 2027-02-14 | 2027-02-15 | RHD4ENSDZ9APPSL170, RHD4CZ9L05SL3400 |
| RHD4CZ9L05SL1200 |  | Installation for RC Base for Lighting Poles for Street Lighting Network - (RD-L-5)-Z9-L05-SL | 2d | 2027-02-16 | 2027-02-17 | RHD4CZ9L05SL1100 |
| RHD4CZ9L05SL1300 |  | Backfill for RC Base for Lighting Poles for Street Lighting Network - (RD-L-5)-Z9-L05-SL | 2d | 2027-02-18 | 2027-02-20 | RHD4CZ9L05SL1200 |
| RHD4CZ9L05SL1400 |  | Installation for Lighting Poles for Street Lighting Network - (RD-L-5)-Z9-L05-SL | 2d | 2027-02-21 | 2027-02-23 | RHD4PRSHLDOSSL1200, RHD4ENMSSL2000, RHD4ENMSSL2010, RHD4PRSHLSTAGSL1200, RHD4CZ9L05SL1300 |
| RHD4CZ9L05SL1500 |  | Luminaire Installation for Lighting Poles for Street Lighting Network - (RD-L-5)-Z9-L05-SL | 2d | 2027-02-24 | 2027-02-25 | RHD4PRSHLDOSSL1300, RHD4PRSHLSTAGSL1300, RHD4CZ9L05SL1400 |
|  | 8996 | **RHD4-02-002-L05-(SL)-Street Lighting Earthing System** |  | 2027-02-27 | 2027-02-28 |  |
| RHD4CZ9L05SL6100 |  | Installation of Earthing for Lighting Poles and Fedder Pillers for Street Lighting Network - (RD-L-5)-Z9-L05-SL | 2d | 2027-02-27 | 2027-02-28 | RHD4ENMSER2000, RHD4ENMSER2010, RHD4CZ9L05SL1500 |
|  | 9002 | **RHD4-02-002-Z9-L05-Telecommunications Network - TC** |  | 2027-03-01 | 2027-03-20 |  |
|  | 9003 | **RHD4-02-002-L05-(TC)-Telecommunications Ducts** |  | 2027-03-01 | 2027-03-15 |  |
| RHD4CZ9L05TC2100 |  | Excavation of HDPE Ducts for Telecom Network - (RD-L-5)-Z9-L05-TC | 3d | 2027-03-01 | 2027-03-03 | RHD4ENSDZ9APPTC190, RHD4CZ9L05SL6100 |
| RHD4CZ9L05TC2200 |  | Installation of HDPE Ducts for Telecom Network - (RD-L-5)-Z9-L05-TC | 4d | 2027-03-04 | 2027-03-08 | RHD4PRSHLDOSTC1000, RHD4PRSHLSTAGTC1000, RHD4CZ9L05TC2100 |
| RHD4CZ9L05TC2400 |  | Backfilling of HDPE Ducts for Telecom Network - (RD-L-5)-Z9-L05-TC | 3d | 2027-03-13 | 2027-03-15 | RHD4CZ9L05TC2200 |
|  | 9004 | **RHD4-02-002-L05-(TC)-Telecommunications Manholes** |  | 2027-03-16 | 2027-03-20 |  |
| RHD4CZ9L05TC5100 |  | Excavation for Manholes for Telecom Network - (RD-L-5)-Z9-L05-TC | 2d | 2027-03-16 | 2027-03-17 | RHD4ENSDZ9APPTC190, RHD4CZ9L05TC2400 |
| RHD4CZ9L05TC5200 |  | Installation of Manholes for Telecom Network - (RD-L-5)-Z9-L05-TC | 2d | 2027-03-18 | 2027-03-20 | RHD4PRSHLDOSTC1200, RHD4PRSHLSTAGTC1200, RHD4CZ9L05TC5100 |
|  | 9006 | **RHD4-02-002-Z9-L05-Information and Communication Technologies - ICT** |  | 2027-03-21 | 2027-03-27 |  |
|  | 9007 | **RHD4-02-002-L05-(ICT)-Information and Communication Technologies Ducts** |  | 2027-03-21 | 2027-03-27 |  |
| RHD4CZ9L05ICT2100 |  | Excavation of HDPE Ducts for ICT Network - (RD-L-5)-Z9-L05-ICT | 2d | 2027-03-21 | 2027-03-22 | RHD4ENSDZ9APPICT200, RHD4CZ9L05TC5200 |
| RHD4CZ9L05ICT2200 |  | Installation of HDPE Ducts for ICT Network - (RD-L-5)-Z9-L05-ICT | 2d | 2027-03-23 | 2027-03-24 | RHD4PRSHLDOSICT1000, RHD4PRSHLSTAGICT1000, RHD4CZ9L05ICT2100 |
| RHD4CZ9L05ICT2400 |  | Backfilling of HDPE Ducts for ICT Network - (RD-L-5)-Z9-L05-ICT | 2d | 2027-03-25 | 2027-03-27 | RHD4CZ9L05ICT2200 |
|  | 9008 | **RHD4-02-002-L05-(ICT)-Information and Communication Technologies Manholes** |  |  |  |  |
|  | 8997 | **RHD4-02-002-Z9-L05-Landscape Network - LS** |  |  |  |  |
|  | 8998 | **RHD4-02-002-L05-(LS)-Landscape Lighting cables** |  |  |  |  |
|  | 8999 | **RHD4-02-002-L05-(LS)-Landscape Feeder Pillars** |  |  |  |  |
|  | 9000 | **RHD4-02-002-L05-(LS)-Landscape Bollard Poles** |  |  |  |  |
|  | 9001 | **RHD4-02-002-L05-(LS)-Landscape Feeder Pillars Earthing** |  |  |  |  |
|  | 9010 | **RHD4-02-002-Z9-L05-Security Network - CCTV** |  |  |  |  |
|  | 9011 | **RHD4-02-002-L05-(CCTV)-Civil Works** |  |  |  |  |
|  | 9027 | **RHD4-02-002-Z9-L06** |  | 2026-08-29 | 2027-07-21 |  |
|  | 9058 | **RHD4-02-002-Z9-L06-Crossings Sewage Network - SWCr** |  |  |  |  |
|  | 9068 | **RHD4-02-002-L06-(SWCr)-MH Works - 1200 mm diameter** |  |  |  |  |
|  | 9069 | **RHD4-02-002-L06-(SWCr)-MH Works - 1200 mm diameter with Back drop** |  |  |  |  |
|  | 9064 | **RHD4-02-002-L06-(SWCr)-UPVC Pipes - 200 mm diameter** |  |  |  |  |
|  | 9102 | **RHD4-02-002-Z9-L06-Crossings Potable Network - PTCr** |  |  |  |  |
|  | 9103 | **RHD4-02-002-L06-(PTCr)-HDPE Pipes - 110 mm diameter** |  |  |  |  |
|  | 9108 | **RHD4-02-002-L06-(PTCr)-Gate Valves (Direct Buried)** |  |  |  |  |
|  | 9149 | **RHD4-02-002-Z9-L06-Crossings Irrigation Network - IRRC** |  |  |  |  |
|  | 9150 | **RHD4-02-002-L06-(IRRC)-HDPE Pipes - 160 mm diameter** |  |  |  |  |
|  | 9158 | **RHD4-02-002-L06-(IRRC)-Gate Valves (Direct Buried)** |  |  |  |  |
|  | 9206 | **RHD4-02-002-Z9-L06-Road Works - RD** |  | 2026-09-09 | 2027-07-21 |  |
|  | 9207 | **RHD4-02-002-L06-(RD)-Subgrade** |  | 2026-09-09 | 2026-09-19 |  |
| RHD4CZ9L06RD1100 |  | Supply, lay and compaction subgrade compacted thickness 300 mm for Roads - (RD-L-6)-Z9-L06-RD | 9d | 2026-09-09 | 2026-09-19 | RHD4ENSDZ9APPEW100, RHD4ENSDZ9APPRD220, RHD4CZ9L06ST1506 |
|  | 9208 | **RHD4-02-002-L06-(RD)-Aggregate Base Course** |  | 2026-09-20 | 2026-09-28 |  |
| RHD4CZ9L06RD2100 |  | Supply, lay and compaction Aggregate base course compacted thickness 300 mmfor Roads - (RD-L-6)-Z9-L06-RD | 7d | 2026-09-20 | 2026-09-28 | RHD4PRSHLDOSRD1000, RHD4PRSHLSTAGRD1000, RHD4CZ9L06RD1100 |
|  | 9209 | **RHD4-02-002-L06-(RD)-Bituminous base course Two Layers, including (MC1)&(RC2)** |  | 2026-09-29 | 2027-06-24 |  |
| RHD4CZ9L06RD3100 |  | Supply, lay and Asphaltic base course including Prime Coat (MC1) for 1st Layer - (RD-L-6)-Z9-L06-RD | 2d | 2026-09-29 | 2026-09-30 | RHD4PRSHLDOSRD1100, RHD4ENMSASPH2000, RHD4ENMSASPH2010, RHD4PRSHLSTAGRD1100, RHD4CZ9L06RD2100, RHD4CZ4C031RD3100 |
| RHD4CZ9L06RD3200 |  | Supply, lay and Asphaltic base course including Tack Coat (RC2) for 2nd Layer - (RD-L-6)-Z9-L06-RD | 2d | 2027-06-23 | 2027-06-24 | RHD4PRSHLDOSRD1100, RHD4PRSHLSTAGRD1100, RHD4CZ9L06ICT5200 |

| ID | WBS | Task | Duration | Start | Finish | Predecessors |
| --- | --- | --- | --- | --- | --- | --- |
|  | 9211 | **RHD4-02-002-L06-(RD)-Precast Concrete Curb** |  | 2027-06-26 | 2027-06-29 |  |
| RHD4CZ9L06RD5100 |  | Supply and installation Precast Concrete Kerb for Roads - (RD-L-6)-Z9-L06-RD | 4d | 2027-06-26 | 2027-06-29 | RHD4PRSHLDOSRD1200, RHD4ENMSRD2000, RHD4ENMSRD2010, RHD4PRSHLSTAGRD1200, RHD4CZ9L06RD3200 |
|  | 9214 | **RHD4-02-002-L06-(RD)-Traffic Signage** |  | 2027-06-30 | 2027-07-08 |  |
| RHD4CZ9L06RD8100 |  | Installation of Traffic Signage for Road Network - (RD-L-6)-Z9-L06-RD | 8d | 2027-06-30 | 2027-07-08 | RHD4PRSHLDOSRD1600, RHD4PRSHLSTAGRD1600, RHD4CZ9L06RD5100 |
|  | 9212 | **RHD4-02-002-L06-(RD)-Precast Interlocking Block Pavers** |  | 2027-07-10 | 2027-07-17 |  |
| RHD4CZ9L06RD6100 |  | Interlocking block pavers for sidewalk-footpath for Side walks and Parking areas - (RD-L-6)-Z9-L06-RD | 7d | 2027-07-10 | 2027-07-17 | RHD4PRSHLDOSRD1300, RHD4PRSHLDOSRD1400, RHD4ENMSRD2000, RHD4ENMSRD2010, RHD4PRSHLSTAGRD1300, RHD4PRSHLSTAGRD1400, RHD4CZ9L06RD8100 |
|  | 9210 | **RHD4-02-002-L06-(RD)-Bituminous concrete wearing course including tack coat (RC2)** |  | 2027-07-18 | 2027-07-19 |  |
| RHD4CZ9L06RD4100 |  | Supply, lay and compaction Asphaltic wearing course including tack Coat (RC2)for Road Network - (RD-L-6)-Z9-L06-RD | 2d | 2027-07-18 | 2027-07-19 | RHD4CZ9L06RD5100, RHD4CZ9L06RD6100 |
|  | 9213 | **RHD4-02-002-L06-(RD)-Pavement Marking** |  | 2027-07-20 | 2027-07-21 |  |
| RHD4CZ9L06RD7100 |  | Pavement Markings for Road Network - (RD-L-6)-Z9-L06-RD | 2d | 2027-07-20 | 2027-07-21 | RHD4PRSHLDOSRD1500, RHD4PRSHLSTAGRD1500, RHD4CZ9L06RD4100 |
|  | 9031 | **RHD4-02-002-Z9-L06-Storm Network - ST** |  | 2026-08-29 | 2027-01-30 |  |
|  | 5251 | **RHD4-02-002-L06-(ST)-GRP Pipes - 600 mm diameter** |  | 2026-12-12 | 2026-12-22 |  |
| RHD4CZ9L06ST1102 |  | Excavation works for GRP Pipe Line 600 mm - (RD-L-6)-Z9-L06-ST | 2d | 2026-12-12 | 2026-12-13 | RHD4CZ9L06ST1103 |
| RHD4CZ9L06ST1202 |  | Bedding works for GRP Pipe Line 600 mm - (RD-L-6)-Z9-L06-ST | 2d | 2026-12-14 | 2026-12-15 | RHD4CZ9L06ST1102 |
| RHD4CZ9L06ST1302 |  | Installing for GRP Pipe Line 600 mm - (RD-L-6)-Z9-L06-ST | 2d | 2026-12-16 | 2026-12-17 | RHD4CZ9L06ST1202 |
| RHD4CZ9L06ST1402 |  | Primary Test for GRP Pipe Line 600 mm - (RD-L-6)-Z9-L06-ST | 2d | 2026-12-19 | 2026-12-20 | RHD4CZ9L06ST1302 |
| RHD4CZ9L06ST1502 |  | Backfilling and warning tape works for GRP Pipe Line 600 mm - (RD-L-6)-Z9-L06-ST | 2d | 2026-12-21 | 2026-12-22 | RHD4CZ9L06ST1402, RHD4CZ9L06ST1505, RHD4CZ9C071ST1505 |
|  | 9048 | **RHD4-02-002-L06-(ST)-MH Works - 1200 mm diameter** |  | 2027-01-11 | 2027-01-21 |  |
| RHD4CZ9L06ST3100 |  | Excavation and PC Blinding works for MH 1200 mm - (RD-L-6)-Z9-L06-ST | 2d | 2027-01-11 | 2027-01-12 | RHD4ENSDZ9APPST110, RHD4ENMSST2000, RHD4ENMSST2010, RHD4CZ9L06ST3101 |
| RHD4CZ9L06ST3200 |  | Installation of Base for MH 1200 mm - (RD-L-6)-Z9-L06-ST | 2d | 2027-01-13 | 2027-01-14 | RHD4PRSHLSTAGST1608, RHD4CZ9L06ST3100 |
| RHD4CZ9L06ST3300 |  | MH Ring and C.Slab works and Backfilling works for MH 1200 mm - (RD-L-6)-Z9-L06-ST | 2d | 2027-01-16 | 2027-01-17 | RHD4PRSHLDOSST1608, RHD4CZ9L06ST3200 |
| RHD4CZ9L06ST3400 |  | Steel Cover for MH 1200 mm - (RD-L-6)-Z9-L06-ST | 2d | 2027-01-18 | 2027-01-19 | RHD4PRSHLDOSST1708, RHD4PRSHLSTAGST1708, RHD4CZ9L06ST3300, RHD4CZ9L06ST2500, RHD4CZ9L06ST1500 |
| RHD4CZ9L06ST3500 |  | Finishing, Benching, Testing works for MH 1200 mm - (RD-L-6)-Z9-L06-ST | 2d | 2027-01-20 | 2027-01-21 | RHD4CZ9L06ST3400 |
|  | 9049 | **RHD4-02-002-L06-(ST)-MH Works - 1500 mm diameter** |  | 2027-01-06 | 2027-01-27 |  |
| RHD4CZ9L06ST3101 |  | Excavation and PC Blinding works for MH 1500 mm - (RD-L-6)-Z9-L06-ST | 4d | 2027-01-06 | 2027-01-10 | RHD4ENSDZ9APPST110, RHD4ENMSST2000, RHD4CZ9L06ST3102 |
| RHD4CZ9L06ST3201 |  | Installation of Base for MH 1500 mm - (RD-L-6)-Z9-L06-ST | 4d | 2027-01-11 | 2027-01-14 | RHD4PRSHLSTAGST1608, RHD4CZ9L06ST3101 |
| RHD4CZ9L06ST3301 |  | MH Ring and C.Slab works and Backfilling works for MH 1500 mm - (RD-L-6)-Z9-L06-ST | 4d | 2027-01-16 | 2027-01-19 | RHD4PRSHLDOSST1608, RHD4CZ9L06ST3201 |
| RHD4CZ9L06ST3401 |  | Steel Cover for MH 1500 mm - (RD-L-6)-Z9-L06-ST | 3d | 2027-01-20 | 2027-01-23 | RHD4PRSHLDOSST1708, RHD4PRSHLSTAGST1708, RHD4CZ9L06ST3301 |
| RHD4CZ9L06ST3501 |  | Finishing, Benching, Testing works for MH 1500 mm - (RD-L-6)-Z9-L06-ST | 4d | 2027-01-24 | 2027-01-27 | RHD4CZ9L06ST3401 |
|  | 9050 | **RHD4-02-002-L06-(ST)-MH Works - 2000 mm diameter** |  | 2027-01-04 | 2027-01-30 |  |
| RHD4CZ9L06ST3102 |  | Excavation and PC Blinding works for MH 2000 mm - (RD-L-6)-Z9-L06-ST | 2d | 2027-01-04 | 2027-01-05 | RHD4ENSDZ9APPST110, RHD4ENMSST2000, RHD4CZ9L06ST2100 |
| RHD4CZ9L06ST3202 |  | Installation of Base for MH 2000 mm - (RD-L-6)-Z9-L06-ST | 2d | 2027-01-06 | 2027-01-07 | RHD4PRSHLSTAGST1608, RHD4CZ9L06ST3102 |
| RHD4CZ9L06ST3302 |  | MH Ring and C.Slab works and Backfilling works for MH 2000 mm - (RD-L-6)-Z9-L06-ST | 2d | 2027-01-09 | 2027-01-10 | RHD4PRSHLDOSST1608, RHD4CZ9L06ST3202 |
| RHD4CZ9L06ST3402 |  | Steel Cover for MH 2000 mm - (RD-L-6)-Z9-L06-ST | 2d | 2027-01-24 | 2027-01-25 | RHD4PRSHLDOSST1708, RHD4PRSHLSTAGST1708, RHD4CZ9L06ST3302, RHD4CZ9L06ST3401 |
| RHD4CZ9L06ST3502 |  | Finishing, Benching, Testing works for MH 2000 mm - (RD-L-6)-Z9-L06-ST | 2d | 2027-01-28 | 2027-01-30 | RHD4CZ9L06ST3402, RHD4CZ9L06ST3501 |
|  | 9038 | **RHD4-02-002-L06-(ST)-GRP Pipes - 1000 mm diameter** |  | 2026-08-29 | 2026-09-08 |  |
| RHD4CZ9L06ST1106 |  | Excavation works for GRP Pipe Line 1000 mm - (RD-L-6)-Z9-L06-ST | 2d | 2026-08-29 | 2026-08-30 | RHD4ENSDZ9APPST110, RHD4CZ9L06RW3000, RHD4PRSHLDOSST1308 |
| RHD4CZ9L06ST1206 |  | Bedding works for GRP Pipe Line 1000 mm - (RD-L-6)-Z9-L06-ST | 2d | 2026-08-31 | 2026-09-01 | RHD4CZ9L06ST1106 |
| RHD4CZ9L06ST1306 |  | Installing for GRP Pipe Line 1000 mm - (RD-L-6)-Z9-L06-ST | 2d | 2026-09-02 | 2026-09-03 | RHD4PRSHLSTAGST1008, RHD4CZ9L06ST1206, RHD4PRSHLDOSST1608, RHD4PRSHLPOST1000, RHD4PRSHLDOSST1008, RHD4PRSHLDOSST1604, RHD4PRSHLDOSST1004 |
| RHD4CZ9L06ST1406 |  | Primary Test for GRP Pipe Line 1000 mm - (RD-L-6)-Z9-L06-ST | 2d | 2026-09-05 | 2026-09-06 | RHD4CZ9L06ST1306 |
| RHD4CZ9L06ST1506 |  | Backfilling and warning tape works for GRP Pipe Line 1000 mm - (RD-L-6)-Z9-L06-ST | 2d | 2026-09-07 | 2026-09-08 | RHD4CZ9L06ST1406 |
|  | 9037 | **RHD4-02-002-L06-(ST)-GRP Pipes - 900 mm diameter** |  | 2026-11-28 | 2026-12-08 |  |
| RHD4CZ9L06ST1105 |  | Excavation works for GRP Pipe Line 900 mm - (RD-L-6)-Z9-L06-ST | 2d | 2026-11-28 | 2026-11-29 | RHD4ENSDZ9APPST110, RHD4CZ9L06ST1106, RHD4CZ9L05ST1102 |
| RHD4CZ9L06ST1205 |  | Bedding works for GRP Pipe Line 900 mm - (RD-L-6)-Z9-L06-ST | 2d | 2026-11-30 | 2026-12-01 | RHD4CZ9L06ST1105 |
| RHD4CZ9L06ST1305 |  | Installing for GRP Pipe Line 900 mm - (RD-L-6)-Z9-L06-ST | 2d | 2026-12-02 | 2026-12-03 | RHD4PRSHLSTAGST1008, RHD4CZ9L06ST1205, RHD4CZ9L06ST1306, RHD4PRSHLDOSST1608, RHD4PRSHLPOST1000, RHD4PRSHLDOSST1008, RHD4PRSHLDOSST1604, RHD4PRSHLDOSST1004 |
| RHD4CZ9L06ST1405 |  | Primary Test for GRP Pipe Line 900 mm - (RD-L-6)-Z9-L06-ST | 2d | 2026-12-05 | 2026-12-06 | RHD4CZ9L06ST1305 |
| RHD4CZ9L06ST1505 |  | Backfilling and warning tape works for GRP Pipe Line 900 mm - (RD-L-6)-Z9-L06-ST | 2d | 2026-12-07 | 2026-12-08 | RHD4CZ9L06ST1405, RHD4CZ9L06ST1506 |
|  | 9036 | **RHD4-02-002-L06-(ST)-GRP Pipes - 800 mm diameter** |  | 2026-11-28 | 2026-12-08 |  |
| RHD4CZ9L06ST1104 |  | Excavation works for GRP Pipe Line 800 mm - (RD-L-6)-Z9-L06-ST | 2d | 2026-11-28 | 2026-11-29 | RHD4ENSDZ9APPST110, RHD4CZ9L06ST1105 SS |
| RHD4CZ9L06ST1204 |  | Bedding works for GRP Pipe Line 800 mm - (RD-L-6)-Z9-L06-ST | 2d | 2026-11-30 | 2026-12-01 | RHD4CZ9L06ST1104 |
| RHD4CZ9L06ST1304 |  | Installing for GRP Pipe Line 800 mm - (RD-L-6)-Z9-L06-ST | 2d | 2026-12-02 | 2026-12-03 | RHD4PRSHLSTAGST1008, RHD4CZ9L06ST1204, RHD4PRSHLDOSST1608, RHD4PRSHLPOST1000, RHD4PRSHLDOSST1008, RHD4PRSHLDOSST1604, RHD4PRSHLDOSST1004 |
| RHD4CZ9L06ST1404 |  | Primary Test for GRP Pipe Line 800 mm - (RD-L-6)-Z9-L06-ST | 2d | 2026-12-05 | 2026-12-06 | RHD4CZ9L06ST1304 |
| RHD4CZ9L06ST1504 |  | Backfilling and warning tape works for GRP Pipe Line 800 mm - (RD-L-6)-Z9-L06-ST | 2d | 2026-12-07 | 2026-12-08 | RHD4CZ9L06ST1404 |
|  | 9035 | **RHD4-02-002-L06-(ST)-GRP Pipes - 700 mm diameter** |  | 2026-12-09 | 2026-12-20 |  |
| RHD4CZ9L06ST1103 |  | Excavation works for GRP Pipe Line 700 mm - (RD-L-6)-Z9-L06-ST | 2d | 2026-12-09 | 2026-12-10 | RHD4ENSDZ9APPST110, RHD4CZ9L06ST1504, RHD4CZ9L06ST1104 |
| RHD4CZ9L06ST1203 |  | Bedding works for GRP Pipe Line 700 mm - (RD-L-6)-Z9-L06-ST | 2d | 2026-12-12 | 2026-12-13 | RHD4CZ9L06ST1103 |
| RHD4CZ9L06ST1303 |  | Installing for GRP Pipe Line 700 mm - (RD-L-6)-Z9-L06-ST | 2d | 2026-12-14 | 2026-12-15 | RHD4PRSHLSTAGST1008, RHD4CZ9L06ST1203, RHD4CZ9L06ST1304, RHD4PRSHLDOSST1608, RHD4PRSHLPOST1000, RHD4PRSHLDOSST1008, RHD4PRSHLDOSST1604, RHD4PRSHLDOSST1004 |
| RHD4CZ9L06ST1403 |  | Primary Test for GRP Pipe Line 700 mm - (RD-L-6)-Z9-L06-ST | 2d | 2026-12-16 | 2026-12-17 | RHD4CZ9L06ST1303 |
| RHD4CZ9L06ST1503 |  | Backfilling and warning tape works for GRP Pipe Line 700 mm - (RD-L-6)-Z9-L06-ST | 2d | 2026-12-19 | 2026-12-20 | RHD4CZ9L06ST1403, RHD4CZ9L06ST1504 |
|  | 9032 | **RHD4-02-002-L06-(ST)-GRP Pipes - 400 mm diameter** |  | 2026-12-21 | 2026-12-31 |  |
| RHD4CZ9L06ST1100 |  | Excavation works for GRP Pipe Line 400 mm - (RD-L-6)-Z9-L06-ST | 2d | 2026-12-21 | 2026-12-22 | RHD4ENSDZ9APPST110, RHD4CZ9L06ST1503, RHD4CZ9L06ST1102 |
| RHD4CZ9L06ST1200 |  | Bedding works for GRP Pipe Line 400 mm - (RD-L-6)-Z9-L06-ST | 2d | 2026-12-23 | 2026-12-24 | RHD4CZ9L06ST1100 |
| RHD4CZ9L06ST1300 |  | Installing for GRP Pipe Line 400 mm - (RD-L-6)-Z9-L06-ST | 2d | 2026-12-26 | 2026-12-27 | RHD4PRSHLSTAGST1008, RHD4CZ9L06ST1200, RHD4CZ9L06ST1303, RHD4PRSHLDOSST1608, RHD4PRSHLPOST1000, RHD4PRSHLDOSST1008, RHD4PRSHLDOSST1604, RHD4PRSHLDOSST1004 |
| RHD4CZ9L06ST1400 |  | Primary Test for GRP Pipe Line 400 mm - (RD-L-6)-Z9-L06-ST | 2d | 2026-12-28 | 2026-12-29 | RHD4CZ9L06ST1300 |
| RHD4CZ9L06ST1500 |  | Backfilling and warning tape works for GRP Pipe Line 400 mm - (RD-L-6)-Z9-L06-ST | 2d | 2026-12-30 | 2026-12-31 | RHD4CZ9L06ST1400, RHD4CZ9L06ST1503 |
|  | 9046 | **RHD4-02-002-L06-(ST)-UPVC Pipes - 300 mm diameter** |  | 2027-01-02 | 2027-01-13 |  |
| RHD4CZ9L06ST2100 |  | Excavation works for UPVC Pipe Line 300 mm - (RD-L-6)-Z9-L06-ST | 2d | 2027-01-02 | 2027-01-03 | RHD4ENSDZ9APPST110, RHD4CZ9L06ST1500, RHD4CZ9L06ST1100 |
| RHD4CZ9L06ST2200 |  | Bedding works for UPVC Pipe Line 300 mm - (RD-L-6)-Z9-L06-ST | 2d | 2027-01-04 | 2027-01-05 | RHD4CZ9L06ST2100 |
| RHD4CZ9L06ST2300 |  | Installing for UPVC Pipe Line 300 mm - (RD-L-6)-Z9-L06-ST | 2d | 2027-01-06 | 2027-01-07 | RHD4PRSHLDOSST1108, RHD4PRSHLSTAGST1108, RHD4CZ9L06ST2200 |
| RHD4CZ9L06ST2400 |  | Primary Test for UPVC Pipe Line 300 mm - (RD-L-6)-Z9-L06-ST | 2d | 2027-01-09 | 2027-01-10 | RHD4CZ9L06ST2300 |

| ID | WBS | Task | Duration | Start | Finish | Predecessors |
| --- | --- | --- | --- | --- | --- | --- |
| RHD4CZ9L06ST2500 |  | Backfilling and warning tape works for UPVC Pipe Line 300 mm - (RD-L-6)-Z9-L06-ST | 3d | 2027-01-11 | 2027-01-13 | RHD4CZ9L06ST2400, RHD4CZ9L06ST6100 |
|  | 9054 | **RHD4-02-002-L06-(ST)-Concrete Encasement** |  | 2027-01-06 | 2027-01-07 |  |
| RHD4CZ9L06ST6100 |  | Pipe Encasement for Storm Pipelines - (RD-L-6)-Z9-L06-ST | 2d | 2027-01-06 | 2027-01-07 | RHD4CZ9L06ST2300 SS, RHD4CZ9L06ST2300 FF, RHD4CZ9L06ST2200 |
|  | 9055 | **RHD4-02-002-Z9-L06-Catch Basin - ST** |  | 2027-01-20 | 2027-02-08 |  |
|  | 9056 | **RHD4-02-002-L06-(ST)-Single Catch Basin Works** |  | 2027-01-20 | 2027-02-08 |  |
| RHD4CZ9L06ST7100 |  | Excavation works for Single Catch Basin - (RD-L-6)-Z9-L06-ST | 3d | 2027-01-20 | 2027-01-23 | RHD4ENSDZ9APPST110, RHD4CZ9L06ST3300, RHD4CZ9L06ST3301 |
| RHD4CZ9L06ST7200 |  | PC Blinding, Installation and Pipe connection for Single Catch Basin - (RD-L-6)-Z9-L06-ST | 3d | 2027-01-24 | 2027-01-26 | RHD4CZ9L06ST7100 |
| RHD4CZ9L06ST7300 |  | Rings & C.Slab & Final Backfill for Single Catch Basin - (RD-L-6)-Z9-L06-ST | 3d | 2027-01-27 | 2027-01-30 | RHD4PRSHLDOSST1308, RHD4PRSHLSTAGST1308, RHD4CZ9L06ST7200 |
| RHD4CZ9L06ST7400 |  | Steel Cover for Single Catch Basin - (RD-L-6)-Z9-L06-ST | 3d | 2027-01-31 | 2027-02-02 | RHD4PRSHLDOSST1708, RHD4CZ9L06ST7300 |
| RHD4CZ9L06ST7500 |  | Finishing and Insulation works for Single Catch Basin - (RD-L-6)-Z9-L06-ST | 5d | 2027-02-03 | 2027-02-08 | RHD4CZ9L06ST7400 |
|  | 9080 | **RHD4-02-002-Z9-L06-Sewage Network - SW** |  | 2027-01-14 | 2027-02-14 |  |
|  | 9090 | **RHD4-02-002-L06-(SW)-MH Works - 1200 mm diameter** |  | 2027-01-18 | 2027-02-14 |  |
| RHD4CZ9L06SW3100 |  | Excavation and PC Blinding works for MH 1200 mm - (RD-L-6)-Z9-L06-SW | 3d | 2027-01-18 | 2027-01-20 | RHD4ENSDZ9APPSW120, RHD4CZ9L06SW2100 |
| RHD4CZ9L06SW3200 |  | Installation of Base for MH 1200 mm - (RD-L-6)-Z9-L06-SW | 6d | 2027-01-21 | 2027-01-27 | RHD4CZ9L06SW3100 |
| RHD4CZ9L06SW3300 |  | MH Ring and C.Slab works and Backfilling works for MH 1200 mm - (RD-L-6)-Z9-L06-SW | 6d | 2027-01-28 | 2027-02-03 | RHD4PRSHLDOSSW1308, RHD4PRSHLSTAGSW1308, RHD4CZ9L06SW3200 |
| RHD4CZ9L06SW3400 |  | Steel Cover for MH 1200 mm - (RD-L-6)-Z9-L06-SW | 3d | 2027-02-04 | 2027-02-07 | RHD4PRSHLDOSSW1408, RHD4PRSHLSTAGSW1408, RHD4CZ9L06SW3300 |
| RHD4CZ9L06SW3500 |  | Finishing, Benching, Testing works for MH 1200 mm - (RD-L-6)-Z9-L06-SW | 6d | 2027-02-08 | 2027-02-14 | RHD4CZ9L06SW3400 |
|  | 957 | **RHD4-02-002-L06-(SW)-MH Works - 1200 mm diameter with Back drop** |  | 2027-01-18 | 2027-02-01 |  |
| RHD4CZ9L06SW3101 |  | Excavation and PC Blinding works for MH 1200 mm - (RD-L-6)-Z9-L06-SW | 2d | 2027-01-18 | 2027-01-19 | RHD4CZ9L06SW3100 SS |
| RHD4CZ9L06SW3201 |  | Installation of Base for MH 1200 mm - (RD-L-6)-Z9-L06-SW | 3d | 2027-01-20 | 2027-01-23 | RHD4CZ9L06SW3101 |
| RHD4CZ9L06SW3301 |  | MH Ring and C.Slab works and Backfilling works for MH 1200 mm - (RD-L-6)-Z9-L06-SW | 3d | 2027-01-24 | 2027-01-26 | RHD4CZ9L06SW3201 |
| RHD4CZ9L06SW3401 |  | Steel Cover for MH 1200 mm - (RD-L-6)-Z9-L06-SW | 2d | 2027-01-27 | 2027-01-28 | RHD4CZ9L06SW3301 |
| RHD4CZ9L06SW3501 |  | Finishing, Benching, Testing works for MH 1200 mm - (RD-L-6)-Z9-L06-SW | 3d | 2027-01-30 | 2027-02-01 | RHD4CZ9L06SW3401 |
|  | 9086 | **RHD4-02-002-L06-(SW)-UPVC Pipes - 200 mm diameter** |  | 2027-01-14 | 2027-02-01 |  |
| RHD4CZ9L06SW2100 |  | Excavation works for UPVC Pipe Line 200 mm - (RD-L-6)-Z9-L06-SW | 3d | 2027-01-14 | 2027-01-17 | RHD4ENSDZ9APPSW120, RHD4CZ9L06ST2500 |
| RHD4CZ9L06SW2200 |  | Bedding works for UPVC Pipe Line 200 mm - (RD-L-6)-Z9-L06-SW | 3d | 2027-01-18 | 2027-01-20 | RHD4CZ9L06SW2100 |
| RHD4CZ9L06SW2300 |  | Installing for UPVC Pipe Line 200 mm - (RD-L-6)-Z9-L06-SW | 4d | 2027-01-21 | 2027-01-25 | RHD4PRSHLDOSSW1008, RHD4PRSHLSTAGSW1008, RHD4CZ9L06SW2200 |
| RHD4CZ9L06SW2400 |  | Primary Test for UPVC Pipe Line 200 mm - (RD-L-6)-Z9-L06-SW | 3d | 2027-01-26 | 2027-01-28 | RHD4CZ9L06SW2300 |
| RHD4CZ9L06SW2500 |  | Backfilling and warning tape works for UPVC Pipe Line 200 mm - (RD-L-6)-Z9-L06-SW | 3d | 2027-01-30 | 2027-02-01 | RHD4CZ9L06SW2400 |
|  | 9089 | **RHD4-02-002-L06-(SW)-Concrete Encasement** |  |  |  |  |
|  | 9117 | **RHD4-02-002-Z9-L06-Potable Network - PT** |  | 2027-02-02 | 2027-03-01 |  |
|  | 9118 | **RHD4-02-002-L06-(PT)-HDPE Pipes - 110 mm diameter** |  | 2027-02-04 | 2027-02-17 |  |
| RHD4CZ9L06PT1100 |  | Excavation works for HDPE Pipline 110 mm - (RD-L-6)-Z9-L06-PT | 2d | 2027-02-04 | 2027-02-06 | RHD4ENSDZ9APPPT130, RHD4ENMSPT2000, RHD4CZ9L06PT1101 |
| RHD4CZ9L06PT1200 |  | Bedding works for HDPE Pipline 110 mm - (RD-L-6)-Z9-L06-PT | 2d | 2027-02-07 | 2027-02-08 | RHD4CZ9L06PT1100, RHD4CZ9L06PT1201 |
| RHD4CZ9L06PT1300 |  | Installing for HDPE Pipline 110 mm - (RD-L-6)-Z9-L06-PT | 2d | 2027-02-10 | 2027-02-11 | RHD4PRSHLDOSPT1000, RHD4PRSHLSTAGPT1000, RHD4CZ9L06PT1200, RHD4CZ9L06PT1301 |
| RHD4CZ9L06PT1400 |  | Primary Test for HDPE Pipline 110 mm - (RD-L-6)-Z9-L06-PT | 2d | 2027-02-13 | 2027-02-14 | RHD4CZ9L06PT1300, RHD4CZ9L06PT1401 |
| RHD4CZ9L06PT1500 |  | Backfilling and warning tape works for HDPE Pipline 110 mm - (RD-L-6)-Z9-L06-PT | 2d | 2027-02-16 | 2027-02-17 | RHD4CZ9L06PT1400, RHD4CZ9L06PT1501 |
|  | 9119 | **RHD4-02-002-L06-(PT)-HDPE Pipes - 160 mm diameter** |  | 2027-02-02 | 2027-02-15 |  |
| RHD4CZ9L06PT1101 |  | Excavation works for HDPE Pipline 160 mm - (RD-L-6)-Z9-L06-PT | 2d | 2027-02-02 | 2027-02-03 | RHD4ENSDZ9APPPT130, RHD4ENMSPT2000, RHD4CZ9L06SW2500 |
| RHD4CZ9L06PT1201 |  | Bedding works for HDPE Pipline 160 mm - (RD-L-6)-Z9-L06-PT | 2d | 2027-02-04 | 2027-02-06 | RHD4CZ9L06PT1101 |
| RHD4CZ9L06PT1301 |  | Installing for HDPE Pipline 160 mm - (RD-L-6)-Z9-L06-PT | 3d | 2027-02-07 | 2027-02-09 | RHD4PRSHLDOSPT1000, RHD4PRSHLSTAGPT1000, RHD4CZ9L06PT1201 |
| RHD4CZ9L06PT1401 |  | Primary Test for HDPE Pipline 160 mm - (RD-L-6)-Z9-L06-PT | 2d | 2027-02-10 | 2027-02-11 | RHD4CZ9L06PT1301 |
| RHD4CZ9L06PT1501 |  | Backfilling and warning tape works for HDPE Pipline 160 mm - (RD-L-6)-Z9-L06-PT | 3d | 2027-02-13 | 2027-02-15 | RHD4CZ9L06PT1401 |
|  | 9123 | **RHD4-02-002-L06-(PT)-Gate Valves (Direct Buried)** |  | 2027-02-10 | 2027-02-17 |  |
| RHD4CZ9L06PT3100 |  | Installation for Direct Buried Gate Valves - (RD-L-6)-Z9-L06-PT | 2d | 2027-02-10 | 2027-02-11 | RHD4PRSHLDOSPT1200, RHD4PRSHLSTAGPT1200, RHD4CZ9L06PT1301 FF, RHD4CZ9L06PT1300 FF, RHD4CZ9L06PT1301 SS, RHD4CZ9L06PT1300 SS |
| RHD4CZ9L06PT3200 |  | Stem and Service box for Direct Buried Gate Valves - (RD-L-6)-Z9-L06-PT | 2d | 2027-02-16 | 2027-02-17 | RHD4PRSHLDOSPT1300, RHD4PRSHLSTAGPT1300, RHD4CZ9L06PT3100, RHD4CZ9L06PT1501 |
|  | 9128 | **RHD4-02-002-L06-(PT)-Air Valve Chambers** |  | 2027-02-10 | 2027-02-18 |  |
| RHD4CZ9L06PT2102 |  | Excavation and Bedding for Air Valve Chambers for Potable Water Network - (RD-L-6)-Z9-L06-PT | 2d | 2027-02-10 | 2027-02-11 | RHD4ENSDZ9APPPT130, RHD4CZ9L06PT1301 |
| RHD4CZ9L06PT2202 |  | PC works for Air Valve Chambers for Potable Water Network - (RD-L-6)-Z9-L06-PT | 2d | 2027-02-13 | 2027-02-14 | RHD4CZ9L06PT2102 |
| RHD4CZ9L06PT2302 |  | Installation for Air Valve Chambers for Potable Water Network - (RD-L-6)-Z9-L06-PT | 2d | 2027-02-15 | 2027-02-16 | RHD4PRSHLDOSPT1100, RHD4PRSHLDOSPT1400, RHD4PRSHLSTAGPT1100, RHD4PRSHLSTAGPT1400, RHD4CZ9L06PT2202 |
| RHD4CZ9L06PT2402 |  | Backfilling works for Air Valve Chambers for Potable Water Network - (RD-L-6)-Z9-L06-PT | 2d | 2027-02-17 | 2027-02-18 | RHD4CZ9L06PT2302 |
|  | 9129 | **RHD4-02-002-L06-(PT)-Air Valves** |  | 2027-02-04 | 2027-02-08 |  |
| RHD4CZ9L06PT3103 |  | Installation for Air Valves for Potable Water Network - (RD-L-6)-Z9-L06-PT | 2d | 2027-02-04 | 2027-02-06 | RHD4PRSHLDOSPT1200, RHD4PRSHLSTAGPT1200, RHD4CZ9L06PT1101 |
| RHD4CZ9L06PT3203 |  | Stem and Service box for Air Valves for Potable Water Network - (RD-L-6)-Z9-L06-PT | 2d | 2027-02-07 | 2027-02-08 | RHD4PRSHLDOSPT1300, RHD4PRSHLSTAGPT1300, RHD4CZ9L06PT3103 |
|  | 9130 | **RHD4-02-002-L06-(PT)-Fire Hydrant** |  | 2027-02-16 | 2027-03-01 |  |
| RHD4CZ9L06PT4100 |  | Excavation and Bedding and Pipe Installation for Fire Hydrant - (RD-L-6)-Z9-L06-PT | 3d | 2027-02-16 | 2027-02-18 | RHD4ENSDZ9APPPT130, RHD4CZ9L06PT1501 |
| RHD4CZ9L06PT4200 |  | Valve Installation for Fire Hydrant - (RD-L-6)-Z9-L06-PT | 2d | 2027-02-20 | 2027-02-21 | RHD4CZ9L06PT4100 |
| RHD4CZ9L06PT4300 |  | Stem for Fire Hydrant - (RD-L-6)-Z9-L06-PT | 2d | 2027-02-23 | 2027-02-24 | RHD4CZ9L06PT4200 |
| RHD4CZ9L06PT4400 |  | Fire Installation for Fire Hydrant - (RD-L-6)-Z9-L06-PT | 2d | 2027-02-25 | 2027-02-27 | RHD4PRSHLDOSPT1500, RHD4PRSHLSTAGPT1500, RHD4CZ9L06PT4300 |
| RHD4CZ9L06PT4500 |  | Protection Barriers for Fire Hydrant - (RD-L-6)-Z9-L06-PT | 2d | 2027-02-28 | 2027-03-01 | RHD4CZ9L06PT4400 |
|  | 9132 | **RHD4-02-002-Z9-L06-Irrigation Network - IRR** |  | 2027-02-20 | 2027-03-08 |  |
|  | 9133 | **RHD4-02-002-L06-(IRR)-HDPE Pipes - 160 mm diameter** |  | 2027-02-20 | 2027-03-08 |  |
| RHD4CZ9L06IRR1100 |  | Excavation works for HDPE Pipline 160 mm - (RD-L-6)-Z9-L06-IRR | 3d | 2027-02-20 | 2027-02-23 | RHD4ENSDZ9APPIRR140, RHD4ENMSRR2000, RHD4CZ9L06PT2402, RHD4CZ9L06PT3203 |
| RHD4CZ9L06IRR1200 |  | Bedding works for HDPE Pipline 160 mm - (RD-L-6)-Z9-L06-IRR | 3d | 2027-02-24 | 2027-02-27 | RHD4CZ9L06IRR1100 |
| RHD4CZ9L06IRR1300 |  | Installing for HDPE Pipline 160 mm - (RD-L-6)-Z9-L06-IRR | 3d | 2027-02-28 | 2027-03-02 | RHD4PRSHLDOSIRR1000, RHD4PRSHLSTAGIRR1000, RHD4CZ9L06IRR1200 |
| RHD4CZ9L06IRR1400 |  | Primary Test for HDPE Pipline 160 mm - (RD-L-6)-Z9-L06-IRR | 2d | 2027-03-03 | 2027-03-04 | RHD4CZ9L06IRR1300 |
| RHD4CZ9L06IRR1500 |  | Backfilling and warning tape works for HDPE Pipline 160 mm - (RD-L-6)-Z9-L06-IRR | 3d | 2027-03-06 | 2027-03-08 | RHD4CZ9L06IRR1400 |
|  | 9141 | **RHD4-02-002-L06-(IRR)-Gate Valves (Direct Buried)** |  | 2027-03-01 | 2027-03-04 |  |
| RHD4CZ9L06IRR3100 |  | Installation for Direct Buried Gate Valves - (RD-L-6)-Z9-L06-IRR | 2d | 2027-03-01 | 2027-03-02 | RHD4PRSHLDOSIRR1100, RHD4PRSHLSTAGIRR1100, RHD4CZ9L06IRR1300 SS, RHD4CZ9L06IRR1300 FF |
| RHD4CZ9L06IRR3200 |  | Stem and Service box for Direct Buried Gate Valves - (RD-L-6)-Z9-L06-IRR | 2d | 2027-03-03 | 2027-03-04 | RHD4PRSHLDOSIRR1300, RHD4PRSHLSTAGIRR1300, RHD4CZ9L06IRR3100 |

| ID | WBS | Task | Duration | Start | Finish | Predecessors |
| --- | --- | --- | --- | --- | --- | --- |
|  | 9144 | **RHD4-02-002-L06-(IRR)-Wash out Chamber** |  |  |  |  |
|  | 9145 | **RHD4-02-002-L06-(IRR)-Wash out Valves** |  |  |  |  |
|  | 9146 | **RHD4-02-002-L06-(IRR)-Air Valve Chamber** |  |  |  |  |
|  | 9147 | **RHD4-02-002-L06-(IRR)-Air Valves** |  |  |  |  |
|  | 9166 | **RHD4-02-002-Z9-L06-Medium Voltage Network - MV** |  | 2026-10-01 | 2026-10-29 |  |
|  | 9167 | **RHD4-02-002-L06-(MV)-Medium Voltage cable trench** |  | 2026-10-01 | 2026-10-29 |  |
| RHD4CZ9L06MV1100 |  | Excavation for Medium Voltage Trench - (RD-L-6)-Z9-L06-MV | 5d | 2026-10-01 | 2026-10-06 | RHD4ENSDZ9APPMV150, RHD4CZ9L06RD3100 |
| RHD4CZ9L06MV1200 |  | Trench Backfilling for Medium Voltage Network - (RD-L-6)-Z9-L06-MV | 5d | 2026-10-25 | 2026-10-29 | RHD4CZ9L06MV4200 |
|  | 9168 | **RHD4-02-002-L06-(MV)-Medium Voltage duct banks** |  | 2026-10-01 | 2026-10-10 |  |
| RHD4CZ9L06MV2100 |  | Excavation of Duct Banks for Medium Voltage Network - (RD-L-6)-Z9-L06-MV | 2d | 2026-10-01 | 2026-10-03 | RHD4ENSDZ9APPMV150, RHD4CZ9L06RD3100 |
| RHD4CZ9L06MV2200 |  | Installation of Duct Banks for Medium Voltage Network - (RD-L-6)-Z9-L06-MV | 2d | 2026-10-04 | 2026-10-05 | RHD4PRSHLDOSMV1000, RHD4PRSHLSTAGMV1000, RHD4CZ9L06MV2100 |
| RHD4CZ9L06MV2300 |  | Pouring of Duct Banks for Medium Voltage Network - (RD-L-6)-Z9-L06-MV | 2d | 2026-10-06 | 2026-10-07 | RHD4CZ9L06MV2200 |
| RHD4CZ9L06MV2400 |  | Backfilling of Duct Banks for Medium Voltage Network - (RD-L-6)-Z9-L06-MV | 2d | 2026-10-08 | 2026-10-10 | RHD4CZ9L06MV2300 |
|  | 9169 | **RHD4-02-002-L06-(MV)-Medium Voltage cables 3Cx 500 mm²** |  | 2026-10-07 | 2026-10-19 |  |
| RHD4CZ9L06MV3100 |  | Installation of Medium Voltage Cables 3Cx 500 mm² - (RD-L-6)-Z9-L06-MV | 5d | 2026-10-07 | 2026-10-12 | RHD4PRSHLDOSMV1100, RHD4ENMSMV2000, RHD4ENMSMV2010, RHD4PRSHLSTAGMV1100, RHD4CZ9L06MV1100 |
| RHD4CZ9L06MV3200 |  | Joints Installation of Medium Voltage Cables 3Cx 500 mm² - (RD-L-6)-Z9-L06-MV | 2d | 2026-10-13 | 2026-10-14 | RHD4PRSHLDOSMV1300, RHD4PRSHLSTAGMV1300, RHD4CZ9L06MV3100 |
| RHD4CZ9L06MV3300 |  | Testing of Medium Voltage Cables 3Cx 500 mm² - (RD-L-6)-Z9-L06-MV | 2d | 2026-10-15 | 2026-10-17 | RHD4CZ9L06MV3200 |
| RHD4CZ9L06MV3400 |  | Termination of Medium Voltage Cables 3Cx 500 mm² - (RD-L-6)-Z9-L06-MV | 2d | 2026-10-18 | 2026-10-19 | RHD4CZ9L06MV3300 |
|  | 9170 | **RHD4-02-002-L06-(MV)-Medium Voltage cables 3Cx 50 mm²** |  | 2026-10-18 | 2026-10-19 |  |
| RHD4CZ9L06MV3401 |  | Termination of Medium Voltage Cables 3Cx 50 mm² - (RD-L-6)-Z9-L06-MV | 2d | 2026-10-18 | 2026-10-19 | RHD4CZ9L06MV3400 SS |
|  | 9171 | **RHD4-02-002-L06-(MV)-Normally open Point (Outdoor Type)** |  | 2026-10-20 | 2026-10-24 |  |
| RHD4CZ9L06MV4100 |  | Installation for Normally open Point - (RD-L-6)-Z9-L06-MV | 2d | 2026-10-20 | 2026-10-21 | RHD4PRSHLDOSMV1400, RHD4PRSHLSTAGMV1400, RHD4CZ9L06MV3401 |
| RHD4CZ9L06MV4200 |  | Termination for Normally open Point - (RD-L-6)-Z9-L06-MV | 2d | 2026-10-22 | 2026-10-24 | RHD4CZ9L06MV4100 |
|  | 9173 | **RHD4-02-002-Z9-L06-Low Voltage Network - LV** |  | 2027-03-06 | 2027-03-18 |  |
|  | 9174 | **RHD4-02-002-L06-(LV)-Low Voltage duct banks** |  |  |  |  |
|  | 9176 | **RHD4-02-002-L06-(LV)-Low Voltage cables** |  | 2027-03-06 | 2027-03-18 |  |
| RHD4CZ9L06LV3100 |  | Excavation for Low Voltage Cables for Low Voltage Network - (RD-L-6)-Z9-L06-LV | 3d | 2027-03-06 | 2027-03-08 | RHD4ENSDZ9APPLV160, RHD4CZ9L06MV1200, RHD4CZ9L06IRR3200 |
| RHD4CZ9L06LV3200 |  | Cable Laying of Low Voltage Cables for Low Voltage Network - (RD-L-6)-Z9-L06-LV | 2d | 2027-03-13 | 2027-03-14 | RHD4PRSHLDOSLV1100, RHD4ENMSLV2000, RHD4ENMSLV2010, RHD4PRSHLSTAGLV1100, RHD4CZ9L06LV3100 |
| RHD4CZ9L06LV3300 |  | Warning tape and Backfill for Low Voltage Cables for Low Voltage Network - (RD-L-6)-Z9-L06-LV | 2d | 2027-03-15 | 2027-03-16 | RHD4CZ9L06LV3200 |
| RHD4CZ9L06LV3400 |  | Testing of Low Voltage Cables for Low Voltage Network - (RD-L-6)-Z9-L06-LV | 2d | 2027-03-17 | 2027-03-18 | RHD4CZ9L06LV3300 |
|  | 9179 | **RHD4-02-002-Z9-L06-Street Lighting Network - SL** |  | 2026-10-11 | 2027-04-21 |  |
|  | 9180 | **RHD4-02-002-L06-(SL)-Street Lighting duct banks** |  | 2026-10-11 | 2026-10-19 |  |
| RHD4CZ9L06SL2100 |  | Excavation of Duct Banks for Street Lighting Network - (RD-L-6)-Z9-L06-SL | 2d | 2026-10-11 | 2026-10-12 | RHD4ENSDZ9APPSL170, RHD4ENSDZ9APPLV160, RHD4CZ9L06MV2400 |
| RHD4CZ9L06SL2200 |  | Installation of Duct Banks for Street Lighting Network - (RD-L-6)-Z9-L06-SL | 2d | 2026-10-13 | 2026-10-14 | RHD4PRSHLDOSSL1000, RHD4PRSHLSTAGSL1000, RHD4CZ9L06SL2100 |
| RHD4CZ9L06SL2300 |  | Pouring of Duct Banks for Street Lighting Network - (RD-L-6)-Z9-L06-SL | 2d | 2026-10-15 | 2026-10-17 | RHD4CZ9L06SL2200 |
| RHD4CZ9L06SL2400 |  | Backfilling of Duct Banks for Street Lighting Network - (RD-L-6)-Z9-L06-SL | 2d | 2026-10-18 | 2026-10-19 | RHD4CZ9L06SL2300 |
|  | 9181 | **RHD4-02-002-L06-(SL)-Street Lighting Drawpit** |  | 2027-03-20 | 2027-03-23 |  |
| RHD4CZ9L06SL5100 |  | Excavation of Drawpit size 600x600x900mm for Street Lighting Network - (RD-L-6)-Z9-L06-SL | 2d | 2027-03-20 | 2027-03-21 | RHD4ENSDZ9APPSL170, RHD4CZ9L06SL2300, RHD4CZ9L06LV3400 |
| RHD4CZ9L06SL5200 |  | Installation of Drawpit size 600x600x900mm for Street Lighting Network - (RD-L-6)-Z9-L06-SL | 2d | 2027-03-22 | 2027-03-23 | RHD4PRSHLDOSSL1400, RHD4PRSHLSTAGSL1400, RHD4CZ9L06SL5100 |
|  | 9182 | **RHD4-02-002-L06-(SL)-Street Lighting cables** |  | 2027-03-24 | 2027-04-06 |  |
| RHD4CZ9L06SL3100 |  | Excavation for Street Lighting Cables for Street Lighting Network - (RD-L-6)-Z9-L06-SL | 4d | 2027-03-24 | 2027-03-28 | RHD4ENSDZ9APPSL170, RHD4CZ9L06SL5200 |
| RHD4CZ9L06SL3200 |  | Cable Laying of Street Lighting Cables for Street Lighting Network - (RD-L-6)-Z9-L06-SL | 3d | 2027-03-29 | 2027-03-31 | RHD4PRSHLDOSSL1100, RHD4ENMSSL2000, RHD4ENMSSL2010, RHD4PRSHLSTAGSL1100, RHD4CZ9L06SL3100 |
| RHD4CZ9L06SL3300 |  | Warning tape and Backfill for Street Lighting Cables for Street Lighting Network - (RD-L-6)-Z9-L06-SL | 3d | 2027-04-01 | 2027-04-04 | RHD4CZ9L06SL3200 |
| RHD4CZ9L06SL3400 |  | Testing of Street Lighting Cables for Street Lighting Network - (RD-L-6)-Z9-L06-SL | 2d | 2027-04-05 | 2027-04-06 | RHD4CZ9L06SL3300 |
|  | 9183 | **RHD4-02-002-L06-(SL)-Street Lighting Poles** |  | 2027-04-07 | 2027-04-19 |  |
| RHD4CZ9L06SL1100 |  | Excavation for RC Base for Lighting Poles for Street Lighting Network - (RD-L-6)-Z9-L06-SL | 2d | 2027-04-07 | 2027-04-08 | RHD4ENSDZ9APPSL170, RHD4CZ9L06SL3400 |
| RHD4CZ9L06SL1200 |  | Installation for RC Base for Lighting Poles for Street Lighting Network - (RD-L-6)-Z9-L06-SL | 2d | 2027-04-10 | 2027-04-11 | RHD4CZ9L06SL1100 |
| RHD4CZ9L06SL1300 |  | Backfill for RC Base for Lighting Poles for Street Lighting Network - (RD-L-6)-Z9-L06-SL | 2d | 2027-04-12 | 2027-04-13 | RHD4CZ9L06SL1200 |
| RHD4CZ9L06SL1400 |  | Installation for Lighting Poles for Street Lighting Network - (RD-L-6)-Z9-L06-SL | 3d | 2027-04-14 | 2027-04-17 | RHD4PRSHLDOSSL1200, RHD4ENMSSL2000, RHD4ENMSSL2010, RHD4PRSHLSTAGSL1200, RHD4CZ9L06SL1300 |
| RHD4CZ9L06SL1500 |  | Luminaire Installation for Lighting Poles for Street Lighting Network - (RD-L-6)-Z9-L06-SL | 2d | 2027-04-18 | 2027-04-19 | RHD4PRSHLDOSSL1300, RHD4PRSHLSTAGSL1300, RHD4CZ9L06SL1400 |
|  | 9185 | **RHD4-02-002-L06-(SL)-Street Lighting Earthing System** |  | 2027-04-20 | 2027-04-21 |  |
| RHD4CZ9L06SL6100 |  | Installation of Earthing for Lighting Poles and Fedder Pillers for Street Lighting Network - (RD-L-6)-Z9-L06-SL | 2d | 2027-04-20 | 2027-04-21 | RHD4ENMSER2000, RHD4ENMSER2010, RHD4CZ9L06SL1500 |
|  | 9191 | **RHD4-02-002-Z9-L06-Telecommunications Network - TC** |  | 2027-04-22 | 2027-05-26 |  |
|  | 9192 | **RHD4-02-002-L06-(TC)-Telecommunications Ducts** |  | 2027-04-22 | 2027-05-19 |  |
| RHD4CZ9L06TC2100 |  | Excavation of HDPE Ducts for Telecom Network - (RD-L-6)-Z9-L06-TC | 6d | 2027-04-22 | 2027-04-28 | RHD4ENSDZ9APPTC190, RHD4CZ9L06SL6100 |
| RHD4CZ9L06TC2200 |  | Installation of HDPE Ducts for Telecom Network - (RD-L-6)-Z9-L06-TC | 8d | 2027-04-29 | 2027-05-08 | RHD4PRSHLDOSTC1000, RHD4PRSHLSTAGTC1000, RHD4CZ9L06TC2100 |
| RHD4CZ9L06TC2400 |  | Backfilling of HDPE Ducts for Telecom Network - (RD-L-6)-Z9-L06-TC | 6d | 2027-05-09 | 2027-05-19 | RHD4CZ9L06TC2200 |
|  | 9193 | **RHD4-02-002-L06-(TC)-Telecommunications Manholes** |  | 2027-05-20 | 2027-05-26 |  |
| RHD4CZ9L06TC5100 |  | Excavation for Manholes for Telecom Network - (RD-L-6)-Z9-L06-TC | 3d | 2027-05-20 | 2027-05-23 | RHD4ENSDZ9APPTC190, RHD4CZ9L06TC2400 |
| RHD4CZ9L06TC5200 |  | Installation of Manholes for Telecom Network - (RD-L-6)-Z9-L06-TC | 3d | 2027-05-24 | 2027-05-26 | RHD4PRSHLDOSTC1200, RHD4PRSHLSTAGTC1200, RHD4CZ9L06TC5100 |
|  | 9195 | **RHD4-02-002-Z9-L06-Information and Communication Technologies - ICT** |  | 2027-05-27 | 2027-06-22 |  |
|  | 9196 | **RHD4-02-002-L06-(ICT)-Information and Communication Technologies Ducts** |  | 2027-05-27 | 2027-06-15 |  |
| RHD4CZ9L06ICT2100 |  | Excavation of HDPE Ducts for ICT Network - (RD-L-6)-Z9-L06-ICT | 5d | 2027-05-27 | 2027-06-01 | RHD4ENSDZ9APPICT200, RHD4CZ9L06TC5200 |
| RHD4CZ9L06ICT2200 |  | Installation of HDPE Ducts for ICT Network - (RD-L-6)-Z9-L06-ICT | 7d | 2027-06-02 | 2027-06-09 | RHD4PRSHLDOSICT1000, RHD4PRSHLSTAGICT1000, RHD4CZ9L06ICT2100 |
| RHD4CZ9L06ICT2400 |  | Backfilling of HDPE Ducts for ICT Network - (RD-L-6)-Z9-L06-ICT | 5d | 2027-06-10 | 2027-06-15 | RHD4CZ9L06ICT2200 |
|  | 9197 | **RHD4-02-002-L06-(ICT)-Information and Communication Technologies Manholes** |  | 2027-06-16 | 2027-06-22 |  |
| RHD4CZ9L06ICT5100 |  | Excavation for Manholes for ICT Network - (RD-L-6)-Z9-L06-ICT | 3d | 2027-06-16 | 2027-06-19 | RHD4ENSDZ9APPICT200, RHD4CZ9L06ICT2400, RHD4CZ9B36EX1000 |
| RHD4CZ9L06ICT5200 |  | Installation of Manholes for ICT Network - (RD-L-6)-Z9-L06-ICT | 3d | 2027-06-20 | 2027-06-22 | RHD4PRSHLDOSICT1200, RHD4PRSHLSTAGICT1200, RHD4CZ9L06ICT5100 |
|  | 9186 | **RHD4-02-002-Z9-L06-Landscape Network - LS** |  |  |  |  |
|  | 9187 | **RHD4-02-002-L06-(LS)-Landscape Lighting cables** |  |  |  |  |

| ID | WBS | Task | Duration | Start | Finish | Predecessors |
| --- | --- | --- | --- | --- | --- | --- |
|  | 9188 | **RHD4-02-002-L06-(LS)-Landscape Feeder Pillars** |  |  |  |  |
|  | 9189 | **RHD4-02-002-L06-(LS)-Landscape Bollard Poles** |  |  |  |  |
|  | 9190 | **RHD4-02-002-L06-(LS)-Landscape Feeder Pillars Earthing** |  |  |  |  |
|  | 9199 | **RHD4-02-002-Z9-L06-Security Network - CCTV** |  |  |  |  |
|  | 9200 | **RHD4-02-002-L06-(CCTV)-Civil Works** |  |  |  |  |
|  | 8460 | **RHD4-02-002-Z9-L02** |  | 2026-08-31 | 2027-09-12 |  |
|  | 8491 | **RHD4-02-002-Z9-L02-Crossings Sewage Network - SWCr** |  |  |  |  |
|  | 8501 | **RHD4-02-002-L02-(SWCr)-MH Works - 1200 mm diameter** |  |  |  |  |
|  | 8503 | **RHD4-02-002-L02-(SWCr)-MH Works - 1500 mm diameter** |  |  |  |  |
|  | 8496 | **RHD4-02-002-L02-(SWCr)-GRP Pipes - 700 mm diameter** |  |  |  |  |
|  | 8497 | **RHD4-02-002-L02-(SWCr)-UPVC Pipes - 200 mm diameter** |  |  |  |  |
|  | 8535 | **RHD4-02-002-Z9-L02-Crossings Potable Network - PTCr** |  |  |  |  |
|  | 8537 | **RHD4-02-002-L02-(PTCr)-HDPE Pipes - 160 mm diameter** |  |  |  |  |
|  | 8536 | **RHD4-02-002-L02-(PTCr)-HDPE Pipes - 110 mm diameter** |  |  |  |  |
|  | 8541 | **RHD4-02-002-L02-(PTCr)-Gate Valves (Direct Buried)** |  |  |  |  |
|  | 8544 | **RHD4-02-002-L02-(PTCr)-Wash out Valve Chambers** |  |  |  |  |
|  | 8545 | **RHD4-02-002-L02-(PTCr)-Wash out Valves** |  |  |  |  |
|  | 8582 | **RHD4-02-002-Z9-L02-Crossings Irrigation Network - IRRC** |  |  |  |  |
|  | 8583 | **RHD4-02-002-L02-(IRRC)-HDPE Pipes - 160 mm diameter** |  |  |  |  |
|  | 8590 | **RHD4-02-002-L02-(IRRC)-HDPE Pipes - 500 mm diameter** |  |  |  |  |
|  | 8591 | **RHD4-02-002-L02-(IRRC)-Gate Valves (Direct Buried)** |  |  |  |  |
|  | 8592 | **RHD4-02-002-L02-(IRRC)-Butterfly Valve Chamber** |  |  |  |  |
|  | 8593 | **RHD4-02-002-L02-(IRRC)-Butterfly Valves** |  |  |  |  |
|  | 8594 | **RHD4-02-002-L02-(IRRC)-Wash out Chamber** |  |  |  |  |
|  | 8595 | **RHD4-02-002-L02-(IRRC)-Wash out Valves** |  |  |  |  |
|  | 8639 | **RHD4-02-002-Z9-L02-Road Works - RD** |  | 2026-09-12 | 2027-09-12 |  |
|  | 8640 | **RHD4-02-002-L02-(RD)-Subgrade** |  | 2026-09-12 | 2026-09-17 |  |
| RHD4CZ9L02RD1100 |  | Supply, lay and compaction subgrade compacted thickness 300 mm for Roads - (RD-L-2)-Z9-L02-RD | 6d | 2026-09-12 | 2026-09-17 | RHD4ENSDZ9APPEW100, RHD4ENSDZ9APPRD220, RHD4CZ9L02ICT3400, RHD4CZ9L02TC3400 |
|  | 8641 | **RHD4-02-002-L02-(RD)-Aggregate Base Course** |  | 2026-09-19 | 2026-09-26 |  |
| RHD4CZ9L02RD2100 |  | Supply, lay and compaction Aggregate base course compacted thickness 300 mmfor Roads - (RD-L-2)-Z9-L02-RD | 6d | 2026-09-19 | 2026-09-26 | RHD4PRSHLDOSRD1000, RHD4PRSHLSTAGRD1000, RHD4CZ9L02RD1100 |
|  | 8642 | **RHD4-02-002-L02-(RD)-Bituminous base course Two Layers, including (MC1)&(RC2)** |  | 2026-09-27 | 2027-07-28 |  |
| RHD4CZ9L02RD3100 |  | Supply, lay and Asphaltic base course including Prime Coat (MC1) for 1st Layer - (RD-L-2)-Z9-L02-RD | 2d | 2026-09-27 | 2026-09-28 | RHD4PRSHLDOSRD1100, RHD4ENMSASPH2000, RHD4ENMSASPH2010, RHD4PRSHLSTAGRD1100, RHD4CZ9L02RD2100, RHD4CZ5L07RD3100, RHD4CZ7C02RD3100 |
| RHD4CZ9L02RD3200 |  | Supply, lay and Asphaltic base course including Tack Coat (RC2) for 2nd Layer - (RD-L-2)-Z9-L02-RD | 2d | 2027-07-27 | 2027-07-28 | RHD4PRSHLDOSRD1100, RHD4PRSHLSTAGRD1100, RHD4CZ9L02CCTV6100 |
|  | 8644 | **RHD4-02-002-L02-(RD)-Precast Concrete Curb** |  | 2027-07-29 | 2027-08-12 |  |
| RHD4CZ9L02RD5100 |  | Supply and installation Precast Concrete Kerb for Roads - (RD-L-2)-Z9-L02-RD | 13d | 2027-07-29 | 2027-08-12 | RHD4PRSHLDOSRD1200, RHD4ENMSRD2000, RHD4ENMSRD2010, RHD4PRSHLSTAGRD1200, RHD4CZ9L02RD3200, RHD4HOASZ1APPLV160 |
|  | 8647 | **RHD4-02-002-L02-(RD)-Traffic Signage** |  | 2027-08-14 | 2027-08-23 |  |
| RHD4CZ9L02RD8100 |  | Installation of Traffic Signage for Road Network - (RD-L-2)-Z9-L02-RD | 9d | 2027-08-14 | 2027-08-23 | RHD4PRSHLDOSRD1600, RHD4PRSHLSTAGRD1600, RHD4CZ9L02RD5100, RHD4CZ9L06RD8100 |
|  | 8645 | **RHD4-02-002-L02-(RD)-Precast Interlocking Block Pavers** |  | 2027-08-24 | 2027-09-05 |  |
| RHD4CZ9L02RD6100 |  | Interlocking block pavers for sidewalk-footpath for Side walks and Parking areas - (RD-L-2)-Z9-L02-RD | 11d | 2027-08-24 | 2027-09-05 | RHD4PRSHLDOSRD1300, RHD4ENMSRD2000, RHD4ENMSRD2010, RHD4PRSHLSTAGRD1300, RHD4CZ9L02RD8100 |
|  | 8643 | **RHD4-02-002-L02-(RD)-Bituminous concrete wearing course including tack coat (RC2)** |  | 2027-09-06 | 2027-09-07 |  |
| RHD4CZ9L02RD4100 |  | Supply, lay and compaction Asphaltic wearing course including tack Coat (RC2)for Road Network - (RD-L-2)-Z9-L02-RD | 2d | 2027-09-06 | 2027-09-07 | RHD4CZ9L02RD5100, RHD4CZ9L02RD6100 |
|  | 8646 | **RHD4-02-002-L02-(RD)-Pavement Marking** |  | 2027-09-08 | 2027-09-12 |  |
| RHD4CZ9L02RD7100 |  | Pavement Markings for Road Network - (RD-L-2)-Z9-L02-RD | 4d | 2027-09-08 | 2027-09-12 | RHD4PRSHLDOSRD1500, RHD4PRSHLSTAGRD1500, RHD4CZ9L02RD4100 |
|  | 8464 | **RHD4-02-002-Z9-L02-Storm Network - ST** |  | 2026-10-19 | 2026-11-26 |  |
|  | 8482 | **RHD4-02-002-L02-(ST)-MH Works - 1500 mm diameter** |  | 2026-11-01 | 2026-11-26 |  |
| RHD4CZ9L02ST3101 |  | Excavation and PC Blinding works for MH 1500 mm - (RD-L-2)-Z9-L02-ST | 5d | 2026-11-01 | 2026-11-05 | RHD4ENSDZ9APPST110, RHD4ENMSST2000, RHD4CZ9L02ST3102 |
| RHD4CZ9L02ST3201 |  | Installation of Base for MH 1500 mm - (RD-L-2)-Z9-L02-ST | 5d | 2026-11-07 | 2026-11-11 | RHD4PRSHLSTAGST1608, RHD4CZ9L02ST3101 |
| RHD4CZ9L02ST3301 |  | MH Ring and C.Slab works and Backfilling works for MH 1500 mm - (RD-L-2)-Z9-L02-ST | 5d | 2026-11-12 | 2026-11-17 | RHD4PRSHLDOSST1608, RHD4CZ9L02ST3201 |
| RHD4CZ9L02ST3401 |  | Steel Cover for MH 1500 mm - (RD-L-2)-Z9-L02-ST | 3d | 2026-11-18 | 2026-11-21 | RHD4PRSHLDOSST1708, RHD4PRSHLSTAGST1708, RHD4CZ9L02ST3301 |
| RHD4CZ9L02ST3501 |  | Finishing, Benching, Testing works for MH 1500 mm - (RD-L-2)-Z9-L02-ST | 5d | 2026-11-22 | 2026-11-26 | RHD4CZ9L02ST3401 |
|  | 8481 | **RHD4-02-002-L02-(ST)-MH Works - 1200 mm diameter** |  | 2026-11-07 | 2026-11-17 |  |
| RHD4CZ9L02ST3100 |  | Excavation and PC Blinding works for MH 1200 mm - (RD-L-2)-Z9-L02-ST | 2d | 2026-11-07 | 2026-11-08 | RHD4ENSDZ9APPST110, RHD4ENMSST2000, RHD4ENMSST2010, RHD4CZ9L02ST3101 |
| RHD4CZ9L02ST3200 |  | Installation of Base for MH 1200 mm - (RD-L-2)-Z9-L02-ST | 2d | 2026-11-09 | 2026-11-10 | RHD4PRSHLSTAGST1608, RHD4CZ9L02ST3100 |
| RHD4CZ9L02ST3300 |  | MH Ring and C.Slab works and Backfilling works for MH 1200 mm - (RD-L-2)-Z9-L02-ST | 2d | 2026-11-11 | 2026-11-12 | RHD4PRSHLDOSST1608, RHD4CZ9L02ST3200 |
| RHD4CZ9L02ST3400 |  | Steel Cover for MH 1200 mm - (RD-L-2)-Z9-L02-ST | 2d | 2026-11-14 | 2026-11-15 | RHD4PRSHLDOSST1708, RHD4PRSHLSTAGST1708, RHD4CZ9L02ST3300, RHD4CZ9L02ST2500 |
| RHD4CZ9L02ST3500 |  | Finishing, Benching, Testing works for MH 1200 mm - (RD-L-2)-Z9-L02-ST | 2d | 2026-11-16 | 2026-11-17 | RHD4CZ9L02ST3400 |
|  | 8483 | **RHD4-02-002-L02-(ST)-MH Works - 2000 mm diameter** |  | 2026-10-29 | 2026-11-11 |  |
| RHD4CZ9L02ST3102 |  | Excavation and PC Blinding works for MH 2000 mm - (RD-L-2)-Z9-L02-ST | 2d | 2026-10-29 | 2026-10-31 | RHD4ENSDZ9APPST110, RHD4ENMSST2000, RHD4CZ9L02ST2100 |
| RHD4CZ9L02ST3202 |  | Installation of Base for MH 2000 mm - (RD-L-2)-Z9-L02-ST | 3d | 2026-11-01 | 2026-11-03 | RHD4PRSHLSTAGST1608, RHD4CZ9L02ST3102 |
| RHD4CZ9L02ST3302 |  | MH Ring and C.Slab works and Backfilling works for MH 2000 mm - (RD-L-2)-Z9-L02-ST | 3d | 2026-11-04 | 2026-11-07 | RHD4PRSHLDOSST1608, RHD4CZ9L02ST3202 |
| RHD4CZ9L02ST3402 |  | Steel Cover for MH 2000 mm - (RD-L-2)-Z9-L02-ST | 2d | 2026-11-08 | 2026-11-09 | RHD4PRSHLDOSST1708, RHD4PRSHLSTAGST1708, RHD4CZ9L02ST3302 |
| RHD4CZ9L02ST3502 |  | Finishing, Benching, Testing works for MH 2000 mm - (RD-L-2)-Z9-L02-ST | 2d | 2026-11-10 | 2026-11-11 | RHD4CZ9L02ST3402 |
|  | 8473 | **RHD4-02-002-L02-(ST)-GRP Pipes - 1200 mm diameter** |  | 2026-10-19 | 2026-11-24 |  |
| RHD4CZ9L02ST1108 |  | Excavation works for GRP Pipe Line 1200 mm - (RD-L-2)-Z9-L02-ST | 2d | 2026-10-19 | 2026-10-20 | RHD4ENSDZ9APPST110, RHD4CZ9L02RW3000, RHD4CZ9C071ST1107 |
| RHD4CZ9L02ST1208 |  | Bedding works for GRP Pipe Line 1200 mm - (RD-L-2)-Z9-L02-ST | 2d | 2026-10-21 | 2026-10-22 | RHD4CZ9L02ST1108 |
| RHD4CZ9L02ST1308 |  | Installing for GRP Pipe Line 1200 mm - (RD-L-2)-Z9-L02-ST | 2d | 2026-11-18 | 2026-11-19 | RHD4PRSHLSTAGST1008, RHD4CZ9L02ST1208, RHD4CZ9L02ST3301, RHD4CZ9L02ST3302, RHD4PRSHLDOSST1608, RHD4PRSHLPOST1000, RHD4PRSHLDOSST1008, RHD4PRSHLDOSST1604, RHD4PRSHLDOSST1004 |
| RHD4CZ9L02ST1408 |  | Primary Test for GRP Pipe Line 1200 mm - (RD-L-2)-Z9-L02-ST | 2d | 2026-11-21 | 2026-11-22 | RHD4CZ9L02ST1308 |
| RHD4CZ9L02ST1508 |  | Backfilling and warning tape works for GRP Pipe Line 1200 mm - (RD-L-2)-Z9-L02-ST | 2d | 2026-11-23 | 2026-11-24 | RHD4CZ9L02ST1408, RHD4CZ9L02ST1504, RHD4CZ9L02ST1506 |
|  | 8472 | **RHD4-02-002-L02-(ST)-GRP Pipes - 1100 mm diameter** |  | 2026-10-19 | 2026-11-01 |  |
| RHD4CZ9L02ST1107 |  | Excavation works for GRP Pipe Line 1100 mm - (RD-L-2)-Z9-L02-ST | 2d | 2026-10-19 | 2026-10-20 | RHD4ENSDZ9APPST110, RHD4CZ9L02ST1108 SS |

| ID | WBS | Task | Duration | Start | Finish | Predecessors |
| --- | --- | --- | --- | --- | --- | --- |
| RHD4CZ9L02ST1207 |  | Bedding works for GRP Pipe Line 1100 mm - (RD-L-2)-Z9-L02-ST | 2d | 2026-10-24 | 2026-10-25 | RHD4CZ9L02ST1107, RHD4CZ9L02ST1208 |
| RHD4CZ9L02ST1307 |  | Installing for GRP Pipe Line 1100 mm - (RD-L-2)-Z9-L02-ST | 2d | 2026-10-26 | 2026-10-27 | RHD4PRSHLSTAGST1008, RHD4CZ9L02ST1207, RHD4PRSHLDOSST1608, RHD4PRSHLPOST1000, RHD4PRSHLDOSST1008, RHD4PRSHLDOSST1604, RHD4PRSHLDOSST1004 |
| RHD4CZ9L02ST1407 |  | Primary Test for GRP Pipe Line 1100 mm - (RD-L-2)-Z9-L02-ST | 2d | 2026-10-28 | 2026-10-29 | RHD4CZ9L02ST1307 |
| RHD4CZ9L02ST1507 |  | Backfilling and warning tape works for GRP Pipe Line 1100 mm - (RD-L-2)-Z9-L02-ST | 2d | 2026-10-31 | 2026-11-01 | RHD4CZ9L02ST1407 |
|  | 8471 | **RHD4-02-002-L02-(ST)-GRP Pipes - 1000 mm diameter** |  | 2026-10-21 | 2026-11-03 |  |
| RHD4CZ9L02ST1106 |  | Excavation works for GRP Pipe Line 1000 mm - (RD-L-2)-Z9-L02-ST | 2d | 2026-10-21 | 2026-10-22 | RHD4ENSDZ9APPST110, RHD4CZ9L02ST1107 |
| RHD4CZ9L02ST1206 |  | Bedding works for GRP Pipe Line 1000 mm - (RD-L-2)-Z9-L02-ST | 2d | 2026-10-26 | 2026-10-27 | RHD4CZ9L02ST1106, RHD4CZ9L02ST1207 |
| RHD4CZ9L02ST1306 |  | Installing for GRP Pipe Line 1000 mm - (RD-L-2)-Z9-L02-ST | 2d | 2026-10-28 | 2026-10-29 | RHD4PRSHLSTAGST1008, RHD4CZ9L02ST1206, RHD4CZ9L02ST1307, RHD4PRSHLDOSST1608, RHD4PRSHLPOST1000, RHD4PRSHLDOSST1008, RHD4PRSHLDOSST1604, RHD4PRSHLDOSST1004 |
| RHD4CZ9L02ST1406 |  | Primary Test for GRP Pipe Line 1000 mm - (RD-L-2)-Z9-L02-ST | 2d | 2026-10-31 | 2026-11-01 | RHD4CZ9L02ST1306, RHD4CZ9L02ST1407 |
| RHD4CZ9L02ST1506 |  | Backfilling and warning tape works for GRP Pipe Line 1000 mm - (RD-L-2)-Z9-L02-ST | 2d | 2026-11-02 | 2026-11-03 | RHD4CZ9L02ST1406, RHD4CZ9L02ST1507 |
|  | 8470 | **RHD4-02-002-L02-(ST)-GRP Pipes - 900 mm diameter** |  | 2026-10-21 | 2026-11-01 |  |
| RHD4CZ9L02ST1105 |  | Excavation works for GRP Pipe Line 900 mm - (RD-L-2)-Z9-L02-ST | 2d | 2026-10-21 | 2026-10-22 | RHD4ENSDZ9APPST110, RHD4CZ9L02ST1106 SS |
| RHD4CZ9L02ST1205 |  | Bedding works for GRP Pipe Line 900 mm - (RD-L-2)-Z9-L02-ST | 2d | 2026-10-24 | 2026-10-25 | RHD4CZ9L02ST1105 |
| RHD4CZ9L02ST1305 |  | Installing for GRP Pipe Line 900 mm - (RD-L-2)-Z9-L02-ST | 2d | 2026-10-26 | 2026-10-27 | RHD4PRSHLSTAGST1008, RHD4CZ9L02ST1205, RHD4PRSHLDOSST1608, RHD4PRSHLPOST1000, RHD4PRSHLDOSST1008, RHD4PRSHLDOSST1604, RHD4PRSHLDOSST1004 |
| RHD4CZ9L02ST1405 |  | Primary Test for GRP Pipe Line 900 mm - (RD-L-2)-Z9-L02-ST | 2d | 2026-10-28 | 2026-10-29 | RHD4CZ9L02ST1305 |
| RHD4CZ9L02ST1505 |  | Backfilling and warning tape works for GRP Pipe Line 900 mm - (RD-L-2)-Z9-L02-ST | 2d | 2026-10-31 | 2026-11-01 | RHD4CZ9L02ST1405 |
|  | 8469 | **RHD4-02-002-L02-(ST)-GRP Pipes - 800 mm diameter** |  | 2026-10-21 | 2026-11-03 |  |
| RHD4CZ9L02ST1104 |  | Excavation works for GRP Pipe Line 800 mm - (RD-L-2)-Z9-L02-ST | 2d | 2026-10-21 | 2026-10-22 | RHD4ENSDZ9APPST110, RHD4CZ9L02ST1105 SS |
| RHD4CZ9L02ST1204 |  | Bedding works for GRP Pipe Line 800 mm - (RD-L-2)-Z9-L02-ST | 2d | 2026-10-24 | 2026-10-25 | RHD4CZ9L02ST1104 |
| RHD4CZ9L02ST1304 |  | Installing for GRP Pipe Line 800 mm - (RD-L-2)-Z9-L02-ST | 2d | 2026-10-28 | 2026-10-29 | RHD4PRSHLSTAGST1008, RHD4CZ9L02ST1204, RHD4CZ9L02ST1305, RHD4PRSHLDOSST1608, RHD4PRSHLPOST1000, RHD4PRSHLDOSST1008, RHD4PRSHLDOSST1604, RHD4PRSHLDOSST1004 |
| RHD4CZ9L02ST1404 |  | Primary Test for GRP Pipe Line 800 mm - (RD-L-2)-Z9-L02-ST | 2d | 2026-10-31 | 2026-11-01 | RHD4CZ9L02ST1304, RHD4CZ9L02ST1405 |
| RHD4CZ9L02ST1504 |  | Backfilling and warning tape works for GRP Pipe Line 800 mm - (RD-L-2)-Z9-L02-ST | 2d | 2026-11-02 | 2026-11-03 | RHD4CZ9L02ST1404, RHD4CZ9L02ST1505 |
|  | 8468 | **RHD4-02-002-L02-(ST)-GRP Pipes - 700 mm diameter** |  |  |  |  |
|  | 8467 | **RHD4-02-002-L02-(ST)-GRP Pipes - 600 mm diameter** |  | 2026-10-21 | 2026-11-01 |  |
| RHD4CZ9L02ST1102 |  | Excavation works for GRP Pipe Line 600 mm - (RD-L-2)-Z9-L02-ST | 2d | 2026-10-21 | 2026-10-22 | RHD4ENSDZ9APPST110, RHD4CZ9L02ST1104 SS |
| RHD4CZ9L02ST1202 |  | Bedding works for GRP Pipe Line 600 mm - (RD-L-2)-Z9-L02-ST | 2d | 2026-10-24 | 2026-10-25 | RHD4CZ9L02ST1102 |
| RHD4CZ9L02ST1302 |  | Installing for GRP Pipe Line 600 mm - (RD-L-2)-Z9-L02-ST | 2d | 2026-10-26 | 2026-10-27 | RHD4PRSHLSTAGST1008, RHD4CZ9L02ST1202, RHD4PRSHLDOSST1608, RHD4PRSHLPOST1000, RHD4PRSHLDOSST1008, RHD4PRSHLDOSST1604, RHD4PRSHLDOSST1004 |
| RHD4CZ9L02ST1402 |  | Primary Test for GRP Pipe Line 600 mm - (RD-L-2)-Z9-L02-ST | 2d | 2026-10-28 | 2026-10-29 | RHD4CZ9L02ST1302 |
| RHD4CZ9L02ST1502 |  | Backfilling and warning tape works for GRP Pipe Line 600 mm - (RD-L-2)-Z9-L02-ST | 2d | 2026-10-31 | 2026-11-01 | RHD4CZ9L02ST1402 |
|  | 8466 | **RHD4-02-002-L02-(ST)-GRP Pipes - 500 mm diameter** |  | 2026-10-24 | 2026-11-03 |  |
| RHD4CZ9L02ST1101 |  | Excavation works for GRP Pipe Line 500 mm - (RD-L-2)-Z9-L02-ST | 2d | 2026-10-24 | 2026-10-25 | RHD4ENSDZ9APPST110, RHD4CZ9L02ST1102 |
| RHD4CZ9L02ST1201 |  | Bedding works for GRP Pipe Line 500 mm - (RD-L-2)-Z9-L02-ST | 2d | 2026-10-26 | 2026-10-27 | RHD4CZ9L02ST1101, RHD4CZ9L02ST1202 |
| RHD4CZ9L02ST1301 |  | Installing for GRP Pipe Line 500 mm - (RD-L-2)-Z9-L02-ST | 2d | 2026-10-28 | 2026-10-29 | RHD4PRSHLSTAGST1008, RHD4CZ9L02ST1201, RHD4CZ9L02ST1302, RHD4PRSHLDOSST1608, RHD4PRSHLPOST1000, RHD4PRSHLDOSST1008, RHD4PRSHLDOSST1604, RHD4PRSHLDOSST1004 |
| RHD4CZ9L02ST1401 |  | Primary Test for GRP Pipe Line 500 mm - (RD-L-2)-Z9-L02-ST | 2d | 2026-10-31 | 2026-11-01 | RHD4CZ9L02ST1301, RHD4CZ9L02ST1402 |
| RHD4CZ9L02ST1501 |  | Backfilling and warning tape works for GRP Pipe Line 500 mm - (RD-L-2)-Z9-L02-ST | 2d | 2026-11-02 | 2026-11-03 | RHD4CZ9L02ST1401, RHD4CZ9L02ST1502 |
|  | 8479 | **RHD4-02-002-L02-(ST)-UPVC Pipes - 300 mm diameter** |  | 2026-10-26 | 2026-11-10 |  |
| RHD4CZ9L02ST2100 |  | Excavation works for UPVC Pipe Line 300 mm - (RD-L-2)-Z9-L02-ST | 3d | 2026-10-26 | 2026-10-28 | RHD4ENSDZ9APPST110, RHD4CZ9L02ST1101, RHD4CZ3C083ST7500, RHD4CZ5C051PT3200 |
| RHD4CZ9L02ST2200 |  | Bedding works for UPVC Pipe Line 300 mm - (RD-L-2)-Z9-L02-ST | 3d | 2026-10-29 | 2026-11-01 | RHD4CZ9L02ST2100 |
| RHD4CZ9L02ST2300 |  | Installing for UPVC Pipe Line 300 mm - (RD-L-2)-Z9-L02-ST | 3d | 2026-11-02 | 2026-11-04 | RHD4PRSHLDOSST1108, RHD4PRSHLSTAGST1108, RHD4CZ9L02ST2200 |
| RHD4CZ9L02ST2400 |  | Primary Test for UPVC Pipe Line 300 mm - (RD-L-2)-Z9-L02-ST | 2d | 2026-11-05 | 2026-11-07 | RHD4CZ9L02ST2300, RHD4CZ9L02ST6100 |
| RHD4CZ9L02ST2500 |  | Backfilling and warning tape works for UPVC Pipe Line 300 mm - (RD-L-2)-Z9-L02-ST | 3d | 2026-11-08 | 2026-11-10 | RHD4CZ9L02ST2400, RHD4CZ9L02ST6100 |
|  | 8487 | **RHD4-02-002-L02-(ST)-Concrete Encasement** |  | 2026-11-03 | 2026-11-04 |  |
| RHD4CZ9L02ST6100 |  | Pipe Encasement for Storm Pipelines - (RD-L-2)-Z9-L02-ST | 2d | 2026-11-03 | 2026-11-04 | RHD4CZ9L02ST2300 SS, RHD4CZ9L02ST2300 FF, RHD4CZ9L02ST2200 |
|  | 8488 | **RHD4-02-002-Z9-L02-Catch Basin - ST** |  | 2026-11-14 | 2026-12-10 |  |
|  | 8489 | **RHD4-02-002-L02-(ST)-Single Catch Basin Works** |  | 2026-11-14 | 2026-12-10 |  |
| RHD4CZ9L02ST7100 |  | Excavation works for Single Catch Basin - (RD-L-2)-Z9-L02-ST | 4d | 2026-11-14 | 2026-11-17 | RHD4ENSDZ9APPST110, RHD4CZ9L02ST3300 |
| RHD4CZ9L02ST7200 |  | PC Blinding, Installation and Pipe connection for Single Catch Basin - (RD-L-2)-Z9-L02-ST | 4d | 2026-11-18 | 2026-11-22 | RHD4CZ9L02ST7100 |
| RHD4CZ9L02ST7300 |  | Rings & C.Slab & Final Backfill for Single Catch Basin - (RD-L-2)-Z9-L02-ST | 5d | 2026-11-23 | 2026-11-28 | RHD4PRSHLDOSST1308, RHD4PRSHLSTAGST1308, RHD4CZ9L02ST7200 |
| RHD4CZ9L02ST7400 |  | Steel Cover for Single Catch Basin - (RD-L-2)-Z9-L02-ST | 4d | 2026-11-29 | 2026-12-02 | RHD4PRSHLDOSST1708, RHD4CZ9L02ST7300 |
| RHD4CZ9L02ST7500 |  | Finishing and Insulation works for Single Catch Basin - (RD-L-2)-Z9-L02-ST | 7d | 2026-12-03 | 2026-12-10 | RHD4CZ9L02ST7400 |
|  | 8513 | **RHD4-02-002-Z9-L02-Sewage Network - SW** |  | 2026-11-28 | 2027-04-03 |  |
|  | 1895 | **RHD4-02-002-L02-(SW)-GRP Pipes - 500 mm diameter** |  | 2026-11-28 | 2026-12-08 |  |
| RHD4CZ9L02SW1102 |  | Excavation works for GRP Pipe Line 500 mm - (RD-L-2)-Z9-L02-SW | 2d | 2026-11-28 | 2026-11-29 | RHD4CZ9L02ST3501, RHD4CZ9L02ST2500 |
| RHD4CZ9L02SW1202 |  | Bedding works for GRP Pipe Line 500 mm - (RD-L-2)-Z9-L02-SW | 2d | 2026-11-30 | 2026-12-01 | RHD4CZ9L02SW1102 |
| RHD4CZ9L02SW1302 |  | Installing for GRP Pipe Line 500 mm - (RD-L-2)-Z9-L02-SW | 2d | 2026-12-02 | 2026-12-03 | RHD4CZ9L02SW1202 |
| RHD4CZ9L02SW1402 |  | Primary Test for GRP Pipe Line 500 mm - (RD-L-2)-Z9-L02-SW | 2d | 2026-12-05 | 2026-12-06 | RHD4CZ9L02SW1302 |
| RHD4CZ9L02SW1502 |  | Backfilling and warning tape works for GRP Pipe Line 500 mm - (RD-L-2)-Z9-L02-SW | 2d | 2026-12-07 | 2026-12-08 | RHD4CZ9L02SW1402 |
|  | 957 | **RHD4-02-002-L02-(SW)-MH Works - 1200 mm diameter with Back drop** |  | 2026-12-09 | 2026-12-20 |  |
| RHD4CZ9L02SW3101 |  | Excavation and PC Blinding works for MH 1200 mm - (RD-L-2)-Z9-L02-SW | 2d | 2026-12-09 | 2026-12-10 | RHD4CZ9L02SW2100, RHD4CZ5RA07PT3202 |
| RHD4CZ9L02SW3201 |  | Installation of Base for MH 1200 mm - (RD-L-2)-Z9-L02-SW | 2d | 2026-12-12 | 2026-12-13 | RHD4CZ9L02SW3101 |
| RHD4CZ9L02SW3301 |  | MH Ring and C.Slab works and Backfilling works for MH 1200 mm - (RD-L-2)-Z9-L02-SW | 2d | 2026-12-14 | 2026-12-15 | RHD4CZ9L02SW3201 |
| RHD4CZ9L02SW3401 |  | Steel Cover for MH 1200 mm - (RD-L-2)-Z9-L02-SW | 2d | 2026-12-16 | 2026-12-17 | RHD4CZ9L02SW3301 |
| RHD4CZ9L02SW3501 |  | Finishing, Benching, Testing works for MH 1200 mm - (RD-L-2)-Z9-L02-SW | 2d | 2026-12-19 | 2026-12-20 | RHD4CZ9L02SW3401, RHD4CZ9L02SW1502, RHD4CZ9L02ST1508 |
|  | 8523 | **RHD4-02-002-L02-(SW)-MH Works - 1200 mm diameter** |  | 2026-12-21 | 2027-04-03 |  |
| RHD4CZ9L02SW3100 |  | Excavation and PC Blinding works for MH 1200 mm - (RD-L-2)-Z9-L02-SW | 13d | 2026-12-21 | 2027-01-04 | RHD4ENSDZ9APPSW120, RHD4CZ9L02SW3501, RHD4CZ9L02SW3101 |
| RHD4CZ9L02SW3200 |  | Installation of Base for MH 1200 mm - (RD-L-2)-Z9-L02-SW | 21d | 2027-01-05 | 2027-01-28 | RHD4CZ9L02SW3100 |
| RHD4CZ9L02SW3300 |  | MH Ring and C.Slab works and Backfilling works for MH 1200 mm - (RD-L-2)-Z9-L02-SW | 21d | 2027-01-30 | 2027-02-23 | RHD4PRSHLDOSSW1308, RHD4PRSHLSTAGSW1308, RHD4CZ9L02SW3200 |
| RHD4CZ9L02SW3400 |  | Steel Cover for MH 1200 mm - (RD-L-2)-Z9-L02-SW | 9d | 2027-02-24 | 2027-03-06 | RHD4PRSHLDOSSW1408, RHD4PRSHLSTAGSW1408, RHD4CZ9L02SW3300 |
| RHD4CZ9L02SW3500 |  | Finishing, Benching, Testing works for MH 1200 mm - (RD-L-2)-Z9-L02-SW | 21d | 2027-03-07 | 2027-04-03 | RHD4CZ9L02SW3400 |
|  | 8518 | **RHD4-02-002-L02-(SW)-GRP Pipes - 700 mm diameter** |  |  |  |  |

| ID | WBS | Task | Duration | Start | Finish | Predecessors |
| --- | --- | --- | --- | --- | --- | --- |
|  | 8519 | **RHD4-02-002-L02-(SW)-UPVC Pipes - 200 mm diameter** |  | 2026-11-30 | 2027-01-11 |  |
| RHD4CZ9L02SW2100 |  | Excavation works for UPVC Pipe Line 200 mm - (RD-L-2)-Z9-L02-SW | 8d | 2026-11-30 | 2026-12-08 | RHD4ENSDZ9APPSW120, RHD4CZ9L02SW1102 |
| RHD4CZ9L02SW2200 |  | Bedding works for UPVC Pipe Line 200 mm - (RD-L-2)-Z9-L02-SW | 7d | 2026-12-09 | 2026-12-16 | RHD4CZ9L02SW2100 |
| RHD4CZ9L02SW2300 |  | Installing for UPVC Pipe Line 200 mm - (RD-L-2)-Z9-L02-SW | 9d | 2026-12-17 | 2026-12-27 | RHD4PRSHLDOSSW1008, RHD4PRSHLSTAGSW1008, RHD4CZ9L02SW2200 |
| RHD4CZ9L02SW2400 |  | Primary Test for UPVC Pipe Line 200 mm - (RD-L-2)-Z9-L02-SW | 5d | 2026-12-28 | 2027-01-02 | RHD4CZ9L02SW2300 |
| RHD4CZ9L02SW2500 |  | Backfilling and warning tape works for UPVC Pipe Line 200 mm - (RD-L-2)-Z9-L02-SW | 8d | 2027-01-03 | 2027-01-11 | RHD4CZ9L02SW2400 |
|  | 8522 | **RHD4-02-002-L02-(SW)-Concrete Encasement** |  |  |  |  |
|  | 8550 | **RHD4-02-002-Z9-L02-Potable Network - PT** |  | 2027-01-03 | 2027-04-06 |  |
|  | 8552 | **RHD4-02-002-L02-(PT)-HDPE Pipes - 160 mm diameter** |  | 2027-01-03 | 2027-02-17 |  |
| RHD4CZ9L02PT1101 |  | Excavation works for HDPE Pipline 160 mm - (RD-L-2)-Z9-L02-PT | 8d | 2027-01-03 | 2027-01-11 | RHD4ENSDZ9APPPT130, RHD4ENMSPT2000, RHD4CZ9L02SW2400, RHD4CZ9L02SW2100 |
| RHD4CZ9L02PT1201 |  | Bedding works for HDPE Pipline 160 mm - (RD-L-2)-Z9-L02-PT | 7d | 2027-01-12 | 2027-01-19 | RHD4CZ9L02PT1101 |
| RHD4CZ9L02PT1301 |  | Installing for HDPE Pipline 160 mm - (RD-L-2)-Z9-L02-PT | 11d | 2027-01-20 | 2027-02-01 | RHD4PRSHLDOSPT1000, RHD4PRSHLSTAGPT1000, RHD4CZ9L02PT1201 |
| RHD4CZ9L02PT1401 |  | Primary Test for HDPE Pipline 160 mm - (RD-L-2)-Z9-L02-PT | 5d | 2027-02-02 | 2027-02-07 | RHD4CZ9L02PT1301 |
| RHD4CZ9L02PT1501 |  | Backfilling and warning tape works for HDPE Pipline 160 mm - (RD-L-2)-Z9-L02-PT | 9d | 2027-02-08 | 2027-02-17 | RHD4CZ9L02PT1401 |
|  | 6478 | **RHD4-02-002-L02-(PT)-Wash out Valve Chambers** |  | 2027-01-12 | 2027-02-06 |  |
| RHD4CZ9L02PT2101 |  | Excavation and Bedding for Wash out Valve Chambers for Potable Water Network - (RD-L-2)-Z9-L02-PT | 2d | 2027-01-12 | 2027-01-13 | RHD4CZ9L02PT1101 |
| RHD4CZ9L02PT2201 |  | PC works for Wash out Valve Chambers for Potable Water Network - (RD-L-2)-Z9-L02-PT | 2d | 2027-01-14 | 2027-01-16 | RHD4CZ9L02PT2101 |
| RHD4CZ9L02PT2301 |  | Installation for Wash out Valve Chambers for Potable Water Network - (RD-L-2)-Z9-L02-PT | 2d | 2027-01-17 | 2027-01-18 | RHD4CZ9L02PT2201 |
| RHD4CZ9L02PT2401 |  | Backfilling works for Wash out Valve Chambers for Potable Water Network - (RD-L-2)-Z9-L02-PT | 2d | 2027-02-04 | 2027-02-06 | RHD4CZ9L02PT2301, RHD4CZ9L02PT5100 |
|  | 6479 | **RHD4-02-002-L02-(PT)-Wash out Valves** |  | 2027-02-02 | 2027-02-08 |  |
| RHD4CZ9L02PT3102 |  | Installation for Wash out Valves for Potable Water Network - (RD-L-2)-Z9-L02-PT | 2d | 2027-02-02 | 2027-02-03 | RHD4CZ9L02PT2301, RHD4CZ9L02PT1301 |
| RHD4CZ9L02PT3202 |  | Stem and Service box for Wash out Valves for Potable Water Network - (RD-L-2)-Z9-L02-PT | 2d | 2027-02-07 | 2027-02-08 | RHD4CZ9L02PT3102, RHD4CZ9L02PT2401, RHD4CZ9L02SW3501 |
|  | 6483 | **RHD4-02-002-L02-(PT)-Concrete Encasement** |  | 2027-02-02 | 2027-02-03 |  |
| RHD4CZ9L02PT5100 |  | Pipe Encasement for Potable Pipelines - (RD-L-2)-Z9-L02-PT | 2d | 2027-02-02 | 2027-02-03 | RHD4CZ9L02PT1301 |
|  | 8551 | **RHD4-02-002-L02-(PT)-HDPE Pipes - 110 mm diameter** |  | 2027-01-03 | 2027-02-11 |  |
| RHD4CZ9L02PT1100 |  | Excavation works for HDPE Pipline 110 mm - (RD-L-2)-Z9-L02-PT | 2d | 2027-01-03 | 2027-01-04 | RHD4ENSDZ9APPPT130, RHD4ENMSPT2000, RHD4CZ9L02PT1101 SS |
| RHD4CZ9L02PT1200 |  | Bedding works for HDPE Pipline 110 mm - (RD-L-2)-Z9-L02-PT | 2d | 2027-01-20 | 2027-01-21 | RHD4CZ9L02PT1100, RHD4CZ9L02PT1201 |
| RHD4CZ9L02PT1300 |  | Installing for HDPE Pipline 110 mm - (RD-L-2)-Z9-L02-PT | 2d | 2027-01-23 | 2027-01-24 | RHD4PRSHLDOSPT1000, RHD4PRSHLSTAGPT1000, RHD4CZ9L02PT1200 |
| RHD4CZ9L02PT1400 |  | Primary Test for HDPE Pipline 110 mm - (RD-L-2)-Z9-L02-PT | 2d | 2027-02-08 | 2027-02-09 | RHD4CZ9L02PT1300, RHD4CZ9L02PT1401 |
| RHD4CZ9L02PT1500 |  | Backfilling and warning tape works for HDPE Pipline 110 mm - (RD-L-2)-Z9-L02-PT | 2d | 2027-02-10 | 2027-02-11 | RHD4CZ9L02PT1400 |
|  | 8556 | **RHD4-02-002-L02-(PT)-Gate Valves (Direct Buried)** |  | 2027-01-26 | 2027-02-08 |  |
| RHD4CZ9L02PT3100 |  | Installation for Direct Buried Gate Valves - (RD-L-2)-Z9-L02-PT | 6d | 2027-01-26 | 2027-02-01 | RHD4PRSHLDOSPT1200, RHD4PRSHLSTAGPT1200, RHD4CZ9L02PT1301 FF, RHD4CZ9L02PT1300 FF, RHD4CZ9L02PT1301 SS, RHD4CZ9L02PT1300 SS |
| RHD4CZ9L02PT3200 |  | Stem and Service box for Direct Buried Gate Valves - (RD-L-2)-Z9-L02-PT | 6d | 2027-02-02 | 2027-02-08 | RHD4PRSHLDOSPT1300, RHD4PRSHLSTAGPT1300, RHD4CZ9L02PT3100 |
|  | 8561 | **RHD4-02-002-L02-(PT)-Air Valve Chambers** |  | 2027-01-05 | 2027-01-13 |  |
| RHD4CZ9L02PT2102 |  | Excavation and Bedding for Air Valve Chambers for Potable Water Network - (RD-L-2)-Z9-L02-PT | 2d | 2027-01-05 | 2027-01-06 | RHD4ENSDZ9APPPT130, RHD4CZ9L02PT1100 |
| RHD4CZ9L02PT2202 |  | PC works for Air Valve Chambers for Potable Water Network - (RD-L-2)-Z9-L02-PT | 2d | 2027-01-07 | 2027-01-09 | RHD4CZ9L02PT2102 |
| RHD4CZ9L02PT2302 |  | Installation for Air Valve Chambers for Potable Water Network - (RD-L-2)-Z9-L02-PT | 2d | 2027-01-10 | 2027-01-11 | RHD4PRSHLDOSPT1100, RHD4PRSHLDOSPT1400, RHD4PRSHLSTAGPT1100, RHD4PRSHLSTAGPT1400, RHD4CZ9L02PT2202 |
| RHD4CZ9L02PT2402 |  | Backfilling works for Air Valve Chambers for Potable Water Network - (RD-L-2)-Z9-L02-PT | 2d | 2027-01-12 | 2027-01-13 | RHD4CZ9L02PT2302 |
|  | 8562 | **RHD4-02-002-L02-(PT)-Air Valves** |  | 2027-01-12 | 2027-01-16 |  |
| RHD4CZ9L02PT3103 |  | Installation for Air Valves for Potable Water Network - (RD-L-2)-Z9-L02-PT | 2d | 2027-01-12 | 2027-01-13 | RHD4PRSHLDOSPT1200, RHD4PRSHLSTAGPT1200, RHD4CZ9L02PT2302 |
| RHD4CZ9L02PT3203 |  | Stem and Service box for Air Valves for Potable Water Network - (RD-L-2)-Z9-L02-PT | 2d | 2027-01-14 | 2027-01-16 | RHD4PRSHLDOSPT1300, RHD4PRSHLSTAGPT1300, RHD4CZ9L02PT3103, RHD4CZ9L02PT2402 |
|  | 8563 | **RHD4-02-002-L02-(PT)-Fire Hydrant** |  | 2027-02-18 | 2027-04-06 |  |
| RHD4CZ9L02PT4100 |  | Excavation and Bedding and Pipe Installation for Fire Hydrant - (RD-L-2)-Z9-L02-PT | 11d | 2027-02-18 | 2027-03-03 | RHD4ENSDZ9APPPT130, RHD4CZ9L02PT1501, RHD4CZ9L02PT1500 |
| RHD4CZ9L02PT4200 |  | Valve Installation for Fire Hydrant - (RD-L-2)-Z9-L02-PT | 7d | 2027-03-04 | 2027-03-15 | RHD4CZ9L02PT4100 |
| RHD4CZ9L02PT4300 |  | Stem for Fire Hydrant - (RD-L-2)-Z9-L02-PT | 7d | 2027-03-16 | 2027-03-23 | RHD4CZ9L02PT4200 |
| RHD4CZ9L02PT4400 |  | Fire Installation for Fire Hydrant - (RD-L-2)-Z9-L02-PT | 7d | 2027-03-24 | 2027-03-31 | RHD4PRSHLDOSPT1500, RHD4PRSHLSTAGPT1500, RHD4CZ9L02PT4300, RHD4CZ9L02PT3203 |
| RHD4CZ9L02PT4500 |  | Protection Barriers for Fire Hydrant - (RD-L-2)-Z9-L02-PT | 5d | 2027-04-01 | 2027-04-06 | RHD4CZ9L02PT4400 |
|  | 8565 | **RHD4-02-002-Z9-L02-Irrigation Network - IRR** |  | 2027-01-12 | 2027-03-18 |  |
|  | 8566 | **RHD4-02-002-L02-(IRR)-HDPE Pipes - 160 mm diameter** |  | 2027-01-16 | 2027-03-18 |  |
| RHD4CZ9L02IRR1100 |  | Excavation works for HDPE Pipline 160 mm - (RD-L-2)-Z9-L02-IRR | 12d | 2027-01-16 | 2027-01-28 | RHD4ENSDZ9APPIRR140, RHD4ENMSRR2000, RHD4CZ9L02IRR1107 |
| RHD4CZ9L02IRR1200 |  | Bedding works for HDPE Pipline 160 mm - (RD-L-2)-Z9-L02-IRR | 9d | 2027-01-30 | 2027-02-08 | RHD4CZ9L02IRR1100 |
| RHD4CZ9L02IRR1300 |  | Installing for HDPE Pipline 160 mm - (RD-L-2)-Z9-L02-IRR | 12d | 2027-02-09 | 2027-02-23 | RHD4PRSHLDOSIRR1000, RHD4PRSHLSTAGIRR1000, RHD4CZ9L02IRR1200, RHD4CZ7L015ST3500, RHD4CZ7RA05ICT2400, RHD4CZ7C02SW3500 |
| RHD4CZ9L02IRR1400 |  | Primary Test for HDPE Pipline 160 mm - (RD-L-2)-Z9-L02-IRR | 4d | 2027-02-24 | 2027-02-28 | RHD4CZ9L02IRR1300 |
| RHD4CZ9L02IRR1500 |  | Backfilling and warning tape works for HDPE Pipline 160 mm - (RD-L-2)-Z9-L02-IRR | 13d | 2027-03-01 | 2027-03-18 | RHD4CZ9L02IRR1400 |
|  | 6116 | **RHD4-02-002-L02-(IRR)-Butterfly Valve Chamber** |  | 2027-01-16 | 2027-01-24 |  |
| RHD4CZ9L02IRR2100 |  | Excavation and Bedding for Butterfly Valve Chamber for Irrigation Network - (RD-L-2)-Z9-L02-IRR | 2d | 2027-01-16 | 2027-01-17 | RHD4CZ9L02IRR3103 SS |
| RHD4CZ9L02IRR2200 |  | PC works for Butterfly Valve Chamber for Irrigation Network - (RD-L-2)-Z9-L02-IRR | 2d | 2027-01-18 | 2027-01-19 | RHD4CZ9L02IRR2100 |
| RHD4CZ9L02IRR2300 |  | Installation for Butterfly Valve Chamber for Irrigation Network - (RD-L-2)-Z9-L02-IRR | 2d | 2027-01-20 | 2027-01-21 | RHD4CZ9L02IRR2200 |
| RHD4CZ9L02IRR2400 |  | Backfilling works for Butterfly Valve Chamber for Irrigation Network - (RD-L-2)-Z9-L02-IRR | 2d | 2027-01-23 | 2027-01-24 | RHD4CZ9L02IRR2300 |
|  | 8573 | **RHD4-02-002-L02-(IRR)-HDPE Pipes - 500 mm diameter** |  | 2027-01-12 | 2027-01-25 |  |
| RHD4CZ9L02IRR1107 |  | Excavation works for HDPE Pipline 500 mm - (RD-L-2)-Z9-L02-IRR | 3d | 2027-01-12 | 2027-01-14 | RHD4ENSDZ9APPIRR140, RHD4ENMSRR2000, RHD4CZ9L02PT1101 |
| RHD4CZ9L02IRR1207 |  | Bedding works for HDPE Pipline 500 mm - (RD-L-2)-Z9-L02-IRR | 2d | 2027-01-16 | 2027-01-17 | RHD4CZ9L02IRR1107 |
| RHD4CZ9L02IRR1307 |  | Installing for HDPE Pipline 500 mm - (RD-L-2)-Z9-L02-IRR | 3d | 2027-01-18 | 2027-01-20 | RHD4PRSHLDOSIRR1000, RHD4PRSHLSTAGIRR1000, RHD4CZ9L02IRR1207 |
| RHD4CZ9L02IRR1407 |  | Primary Test for HDPE Pipline 500 mm - (RD-L-2)-Z9-L02-IRR | 2d | 2027-01-21 | 2027-01-23 | RHD4CZ9L02IRR1307 |
| RHD4CZ9L02IRR1507 |  | Backfilling and warning tape works for HDPE Pipline 500 mm - (RD-L-2)-Z9-L02-IRR | 2d | 2027-01-24 | 2027-01-25 | RHD4CZ9L02IRR1407 |
|  | 8574 | **RHD4-02-002-L02-(IRR)-Gate Valves (Direct Buried)** |  | 2027-02-15 | 2027-03-03 |  |
| RHD4CZ9L02IRR3100 |  | Installation for Direct Buried Gate Valves - (RD-L-2)-Z9-L02-IRR | 7d | 2027-02-15 | 2027-02-23 | RHD4PRSHLDOSIRR1100, RHD4PRSHLSTAGIRR1100, RHD4CZ9L02IRR1307 SS, RHD4CZ9L02IRR1307 FF, RHD4CZ9L02IRR1300 SS, RHD4CZ9L02IRR1300 FF |
| RHD4CZ9L02IRR3200 |  | Stem and Service box for Direct Buried Gate Valves - (RD-L-2)-Z9-L02-IRR | 7d | 2027-02-24 | 2027-03-03 | RHD4PRSHLDOSIRR1300, RHD4PRSHLSTAGIRR1300, RHD4CZ9L02IRR3100 |
|  | 8577 | **RHD4-02-002-L02-(IRR)-Wash out Chamber** |  | 2027-01-30 | 2027-02-11 |  |
| RHD4CZ9L02IRR2101 |  | Excavation and Bedding for Wash out Chamber for Irrigation Network - (RD-L-2)-Z9-L02-IRR | 3d | 2027-01-30 | 2027-02-01 | RHD4ENSDZ9APPIRR140, RHD4CZ9L02IRR1100 |

| ID | WBS | Task | Duration | Start | Finish | Predecessors |
| --- | --- | --- | --- | --- | --- | --- |
| RHD4CZ9L02IRR2201 |  | PC works for Wash out Chamber for Irrigation Network - (RD-L-2)-Z9-L02-IRR | 3d | 2027-02-02 | 2027-02-04 | RHD4CZ9L02IRR2101 |
| RHD4CZ9L02IRR2301 |  | Installation for Wash out Chamber for Irrigation Network - (RD-L-2)-Z9-L02-IRR | 3d | 2027-02-06 | 2027-02-08 | RHD4PRSHLDOSIRR1200, RHD4PRSHLDOSIRR1400, RHD4PRSHLSTAGIRR1200, RHD4PRSHLSTAGIRR1400, RHD4CZ9L02IRR2201 |
| RHD4CZ9L02IRR2401 |  | Backfilling works for Wash out Chamber for Irrigation Network - (RD-L-2)-Z9-L02-IRR | 3d | 2027-02-09 | 2027-02-11 | RHD4CZ9L02IRR2301 |
|  | 8578 | **RHD4-02-002-L02-(IRR)-Wash out Valves** |  | 2027-01-16 | 2027-01-21 |  |
| RHD4CZ9L02IRR3102 |  | Installation for Wash out Valve for Irrigation Network - (RD-L-2)-Z9-L02-IRR | 3d | 2027-01-16 | 2027-01-18 | RHD4PRSHLDOSIRR1100, RHD4PRSHLSTAGIRR1100, RHD4CZ9L02IRR1100 SS |
| RHD4CZ9L02IRR3202 |  | Stem and Service box for Wash out Valve for Irrigation Network - (RD-L-2)-Z9-L02-IRR | 3d | 2027-01-19 | 2027-01-21 | RHD4PRSHLDOSIRR1300, RHD4PRSHLSTAGIRR1300, RHD4CZ9L02IRR3102 |
|  | 8579 | **RHD4-02-002-L02-(IRR)-Air Valve Chamber** |  | 2027-01-30 | 2027-02-07 |  |
| RHD4CZ9L02IRR2102 |  | Excavation and Bedding for Valve Chamber for Irrigation Network - (RD-L-2)-Z9-L02-IRR | 2d | 2027-01-30 | 2027-01-31 | RHD4ENSDZ9APPIRR140, RHD4CZ9L02IRR1100 |
| RHD4CZ9L02IRR2202 |  | PC works for Valve Chamber for Irrigation Network - (RD-L-2)-Z9-L02-IRR | 2d | 2027-02-01 | 2027-02-02 | RHD4CZ9L02IRR2102 |
| RHD4CZ9L02IRR2302 |  | Installation for Valve Chamber for Irrigation Network - (RD-L-2)-Z9-L02-IRR | 2d | 2027-02-03 | 2027-02-04 | RHD4PRSHLDOSIRR1200, RHD4PRSHLDOSIRR1400, RHD4PRSHLSTAGIRR1200, RHD4PRSHLSTAGIRR1400, RHD4CZ9L02IRR2202 |
| RHD4CZ9L02IRR2402 |  | Backfilling works for Valve Chamber for Irrigation Network - (RD-L-2)-Z9-L02-IRR | 2d | 2027-02-06 | 2027-02-07 | RHD4CZ9L02IRR2302 |
|  | 8580 | **RHD4-02-002-L02-(IRR)-Air Valves** |  | 2027-01-16 | 2027-02-09 |  |
| RHD4CZ9L02IRR3103 |  | Installation for Air Valves for Irrigation Network - (RD-L-2)-Z9-L02-IRR | 2d | 2027-01-16 | 2027-01-17 | RHD4PRSHLDOSIRR1100, RHD4PRSHLSTAGIRR1100, RHD4CZ9L02IRR3102 SS |
| RHD4CZ9L02IRR3203 |  | Stem and Service box for Air Valves for Irrigation Network - (RD-L-2)-Z9-L02-IRR | 2d | 2027-02-08 | 2027-02-09 | RHD4PRSHLDOSIRR1300, RHD4PRSHLSTAGIRR1300, RHD4CZ9L02IRR3103, RHD4CZ9L02IRR2402 |
|  | 6117 | **RHD4-02-002-L02-(IRR)-Butterfly Valves** |  | 2027-01-20 | 2027-01-24 |  |
| RHD4CZ9L02IRR3101 |  | Installation for Butterfly Valves for Irrigation Network - (RD-L-2)-Z9-L02-IRR | 2d | 2027-01-20 | 2027-01-21 | RHD4CZ9L02IRR2300 SS |
| RHD4CZ9L02IRR3201 |  | Stem and Service box for Butterfly Valves for Irrigation Network - (RD-L-2)-Z9-L02-IRR | 2d | 2027-01-23 | 2027-01-24 | RHD4CZ9L02IRR3101 |
|  | 8599 | **RHD4-02-002-Z9-L02-Medium Voltage Network - MV** |  | 2027-02-03 | 2027-04-05 |  |
|  | 8600 | **RHD4-02-002-L02-(MV)-Medium Voltage cable trench** |  | 2027-02-03 | 2027-03-28 |  |
| RHD4CZ9L02MV1100 |  | Excavation for Medium Voltage Trench - (RD-L-2)-Z9-L02-MV | 9d | 2027-02-03 | 2027-02-13 | RHD4ENSDZ9APPMV150, RHD4CZ9L02RD3100, RHD4CZ8A011MV1100 |
| RHD4CZ9L02MV1200 |  | Trench Backfilling for Medium Voltage Network - (RD-L-2)-Z9-L02-MV | 9d | 2027-03-18 | 2027-03-28 | RHD4CZ9L02MV3401, RHD4CZ9L02MV3400 |
|  | 8601 | **RHD4-02-002-L02-(MV)-Medium Voltage duct banks** |  | 2027-02-14 | 2027-03-14 |  |
| RHD4CZ9L02MV2100 |  | Excavation of Duct Banks for Medium Voltage Network - (RD-L-2)-Z9-L02-MV | 5d | 2027-02-14 | 2027-02-18 | RHD4ENSDZ9APPMV150, RHD4CZ9L02MV1100 |
| RHD4CZ9L02MV2200 |  | Installation of Duct Banks for Medium Voltage Network - (RD-L-2)-Z9-L02-MV | 7d | 2027-02-20 | 2027-02-28 | RHD4PRSHLDOSMV1000, RHD4PRSHLSTAGMV1000, RHD4CZ9L02MV2100 |
| RHD4CZ9L02MV2300 |  | Pouring of Duct Banks for Medium Voltage Network - (RD-L-2)-Z9-L02-MV | 5d | 2027-03-01 | 2027-03-06 | RHD4CZ9L02MV2200 |
| RHD4CZ9L02MV2400 |  | Backfilling of Duct Banks for Medium Voltage Network - (RD-L-2)-Z9-L02-MV | 4d | 2027-03-07 | 2027-03-14 | RHD4CZ9L02MV2300 |
|  | 8602 | **RHD4-02-002-L02-(MV)-Medium Voltage cables 3Cx 500 mm²** |  | 2027-02-14 | 2027-03-17 |  |
| RHD4CZ9L02MV3100 |  | Installation of Medium Voltage Cables 3Cx 500 mm² - (RD-L-2)-Z9-L02-MV | 9d | 2027-02-14 | 2027-02-24 | RHD4PRSHLDOSMV1100, RHD4ENMSMV2000, RHD4ENMSMV2010, RHD4PRSHLSTAGMV1100, RHD4CZ9L02MV1100 |
| RHD4CZ9L02MV3200 |  | Joints Installation of Medium Voltage Cables 3Cx 500 mm² - (RD-L-2)-Z9-L02-MV | 4d | 2027-02-25 | 2027-03-01 | RHD4PRSHLDOSMV1300, RHD4PRSHLSTAGMV1300, RHD4CZ9L02MV3100 |
| RHD4CZ9L02MV3300 |  | Testing of Medium Voltage Cables 3Cx 500 mm² - (RD-L-2)-Z9-L02-MV | 9d | 2027-03-02 | 2027-03-15 | RHD4CZ9L02MV3200 |
| RHD4CZ9L02MV3400 |  | Termination of Medium Voltage Cables 3Cx 500 mm² - (RD-L-2)-Z9-L02-MV | 2d | 2027-03-16 | 2027-03-17 | RHD4CZ9L02MV3300 |
|  | 8603 | **RHD4-02-002-L02-(MV)-Medium Voltage cables 3Cx 50 mm²** |  | 2027-02-14 | 2027-02-21 |  |
| RHD4CZ9L02MV3101 |  | Installation of Medium Voltage Cables 3Cx 50 mm² - (RD-L-2)-Z9-L02-MV | 2d | 2027-02-14 | 2027-02-15 | RHD4PRSHLDOSMV1200, RHD4ENMSMV2000, RHD4ENMSMV2010, RHD4PRSHLSTAGMV1200, RHD4CZ9L02MV1100 |
| RHD4CZ9L02MV3301 |  | Testing of Medium Voltage Cables 3Cx 50 mm² - (RD-L-2)-Z9-L02-MV | 2d | 2027-02-16 | 2027-02-17 | RHD4CZ9L02MV3101 |
| RHD4CZ9L02MV3401 |  | Termination of Medium Voltage Cables 3Cx 50 mm² - (RD-L-2)-Z9-L02-MV | 3d | 2027-02-18 | 2027-02-21 | RHD4CZ9L02MV3301 |
|  | 8604 | **RHD4-02-002-L02-(MV)-Normally open Point (Outdoor Type)** |  | 2027-03-29 | 2027-04-01 |  |
| RHD4CZ9L02MV4100 |  | Installation for Normally open Point - (RD-L-2)-Z9-L02-MV | 2d | 2027-03-29 | 2027-03-30 | RHD4PRSHLDOSMV1400, RHD4PRSHLSTAGMV1400, RHD4CZ9L02MV1200 |
| RHD4CZ9L02MV4200 |  | Termination for Normally open Point - (RD-L-2)-Z9-L02-MV | 2d | 2027-03-31 | 2027-04-01 | RHD4CZ9L02MV4100 |
|  | 8605 | **RHD4-02-002-L02-(MV)-Unit Substations** |  | 2027-02-23 | 2027-04-05 |  |
| RHD4CZ9L02MV5100 |  | Excavation for Unit Substations for Medium Voltage Network - (RD-L-2)-Z9-L02-MV | 5d | 2027-02-23 | 2027-02-28 | RHD4ENSDZ9APPMV150, RHD4CZ9L02RD3100, RHD4CZ9L02MV3401 |
| RHD4CZ9L02MV5200 |  | Concrete Base Placement for Unit Substations for Medium Voltage Network - (RD-L-2)-Z9-L02-MV | 5d | 2027-03-01 | 2027-03-06 | RHD4CZ9L02MV5100 |
| RHD4CZ9L02MV5300 |  | Installation for Fences and doors for Medium Voltage Network - (RD-L-2)-Z9-L02-MV | 13d | 2027-03-07 | 2027-03-24 | RHD4CZ9L02MV5200 |
| RHD4CZ9L02MV5400 |  | Installation for Unit Substations for Medium Voltage Network - (RD-L-2)-Z9-L02-MV | 10d | 2027-03-25 | 2027-04-05 | RHD4PRLOLSTAGMV1601, RHD4PRLOLSTAGMV1602, RHD4CZ9L02MV5300, RHD4CZ9L02MV2400 |
|  | 8606 | **RHD4-02-002-Z9-L02-Low Voltage Network - LV** |  | 2027-01-14 | 2027-03-06 |  |
|  | 8607 | **RHD4-02-002-L02-(LV)-Low Voltage duct banks** |  | 2027-01-14 | 2027-02-07 |  |
| RHD4CZ9L02LV2100 |  | Excavation of Duct Banks for Low Voltage Network - (RD-L-2)-Z9-L02-LV | 5d | 2027-01-14 | 2027-01-19 | RHD4ENSDZ9APPLV160, RHD4CZ9L02PT2402 |
| RHD4CZ9L02LV2200 |  | Installation of Duct Banks for Low Voltage Network - (RD-L-2)-Z9-L02-LV | 7d | 2027-01-20 | 2027-01-27 | RHD4PRSHLDOSLV1000, RHD4PRSHLSTAGLV1000, RHD4CZ9L02LV2100 |
| RHD4CZ9L02LV2300 |  | Pouring of Duct Banks for Low Voltage Network - (RD-L-2)-Z9-L02-LV | 5d | 2027-01-28 | 2027-02-02 | RHD4CZ9L02LV2200 |
| RHD4CZ9L02LV2400 |  | Backfilling of Duct Banks for Low Voltage Network - (RD-L-2)-Z9-L02-LV | 4d | 2027-02-03 | 2027-02-07 | RHD4CZ9L02LV2300 |
|  | 8608 | **RHD4-02-002-L02-(LV)-Low Voltage Drawpit** |  | 2027-02-03 | 2027-02-07 |  |
| RHD4CZ9L02LV5100 |  | Excavation of Drawpit size 900x900x1000mm for Low Voltage Network - (RD-L-2)-Z9-L02-LV | 2d | 2027-02-03 | 2027-02-04 | RHD4ENSDZ9APPLV160, RHD4CZ9L02LV2300 |
| RHD4CZ9L02LV5200 |  | Installation of Drawpit size 900x900x1000mm for Low Voltage Network - (RD-L-2)-Z9-L02-LV | 2d | 2027-02-06 | 2027-02-07 | RHD4PRSHLDOSLV1400, RHD4PRSHLSTAGLV1400, RHD4CZ9L02LV5100 |
|  | 8609 | **RHD4-02-002-L02-(LV)-Low Voltage cables** |  | 2027-02-08 | 2027-02-24 |  |
| RHD4CZ9L02LV3100 |  | Excavation for Low Voltage Cables for Low Voltage Network - (RD-L-2)-Z9-L02-LV | 4d | 2027-02-08 | 2027-02-11 | RHD4ENSDZ9APPLV160, RHD4CZ9L02LV5200, RHD4CZ9L02LV2400 |
| RHD4CZ9L02LV3200 |  | Cable Laying of Low Voltage Cables for Low Voltage Network - (RD-L-2)-Z9-L02-LV | 4d | 2027-02-13 | 2027-02-16 | RHD4PRSHLDOSLV1100, RHD4ENMSLV2000, RHD4ENMSLV2010, RHD4PRSHLSTAGLV1100, RHD4CZ9L02LV3100 |
| RHD4CZ9L02LV3300 |  | Warning tape and Backfill for Low Voltage Cables for Low Voltage Network - (RD-L-2)-Z9-L02-LV | 4d | 2027-02-17 | 2027-02-21 | RHD4CZ9L02LV3200 |
| RHD4CZ9L02LV3400 |  | Testing of Low Voltage Cables for Low Voltage Network - (RD-L-2)-Z9-L02-LV | 2d | 2027-02-23 | 2027-02-24 | RHD4CZ9L02LV3300 |
|  | 8610 | **RHD4-02-002-L02-(LV)-Low Voltage Distribution Pillars** |  | 2027-02-25 | 2027-03-06 |  |
| RHD4CZ9L02LV4100 |  | Leveling for Distribution Pillars for Low Voltage Network - (RD-L-2)-Z9-L02-LV | 3d | 2027-02-25 | 2027-02-28 | RHD4CZ9L02LV3400 |
| RHD4CZ9L02LV4200 |  | Lean Concrete for Distribution Pillars for Low Voltage Network - (RD-L-2)-Z9-L02-LV | 2d | 2027-03-01 | 2027-03-02 | RHD4CZ9L02LV4100 |
| RHD4CZ9L02LV4300 |  | Installation of Distribution Pillars for Low Voltage Network - (RD-L-2)-Z9-L02-LV | 3d | 2027-03-03 | 2027-03-06 | RHD4PRSHLDOSLV1200, RHD4PRSHLDOSLV1300, RHD4PRSHLSTAGLV1200, RHD4PRSHLSTAGLV1300, RHD4CZ9L02LV4200 |
|  | 8611 | **RHD4-02-002-L02-(LV)-Low Voltage Distribution Pillars Earthing** |  |  |  |  |
|  | 8612 | **RHD4-02-002-Z9-L02-Street Lighting Network - SL** |  | 2027-01-20 | 2027-07-06 |  |
|  | 8613 | **RHD4-02-002-L02-(SL)-Street Lighting duct banks** |  | 2027-01-20 | 2027-03-01 |  |
| RHD4CZ9L02SL2100 |  | Excavation of Duct Banks for Street Lighting Network - (RD-L-2)-Z9-L02-SL | 8d | 2027-01-20 | 2027-01-28 | RHD4ENSDZ9APPSL170, RHD4CZ9L02LV2100 |
| RHD4CZ9L02SL2200 |  | Installation of Duct Banks for Street Lighting Network - (RD-L-2)-Z9-L02-SL | 12d | 2027-01-30 | 2027-02-11 | RHD4PRSHLDOSSL1000, RHD4PRSHLSTAGSL1000, RHD4CZ9L02SL2100 |
| RHD4CZ9L02SL2300 |  | Pouring of Duct Banks for Street Lighting Network - (RD-L-2)-Z9-L02-SL | 8d | 2027-02-13 | 2027-02-21 | RHD4CZ9L02SL2200 |
| RHD4CZ9L02SL2400 |  | Backfilling of Duct Banks for Street Lighting Network - (RD-L-2)-Z9-L02-SL | 6d | 2027-02-23 | 2027-03-01 | RHD4CZ9L02SL2300 |
|  | 8614 | **RHD4-02-002-L02-(SL)-Street Lighting Drawpit** |  | 2027-03-07 | 2027-03-14 |  |
| RHD4CZ9L02SL5100 |  | Excavation of Drawpit size 600x600x900mm for Street Lighting Network - (RD-L-2)-Z9-L02-SL | 2d | 2027-03-07 | 2027-03-08 | RHD4ENSDZ9APPSL170, RHD4CZ9L02SL2400, RHD4CZ9L02SL2300, RHD4CZ9L02LV4300 |

| ID | WBS | Task | Duration | Start | Finish | Predecessors |
| --- | --- | --- | --- | --- | --- | --- |
| RHD4CZ9L02SL5200 |  | Installation of Drawpit size 600x600x900mm for Street Lighting Network - (RD-L-2)-Z9-L02-SL | 2d | 2027-03-13 | 2027-03-14 | RHD4PRSHLDOSSL1400, RHD4PRSHLSTAGSL1400, RHD4CZ9L02SL5100 |
|  | 8615 | **RHD4-02-002-L02-(SL)-Street Lighting cables** |  | 2027-03-15 | 2027-05-02 |  |
| RHD4CZ9L02SL3100 |  | Excavation for Street Lighting Cables for Street Lighting Network - (RD-L-2)-Z9-L02-SL | 8d | 2027-03-15 | 2027-03-23 | RHD4ENSDZ9APPSL170, RHD4CZ9L02SL5200 |
| RHD4CZ9L02SL3200 |  | Cable Laying of Street Lighting Cables for Street Lighting Network - (RD-L-2)-Z9-L02-SL | 13d | 2027-03-24 | 2027-04-07 | RHD4PRSHLDOSSL1100, RHD4ENMSSL2000, RHD4ENMSSL2010, RHD4PRSHLSTAGSL1100, RHD4CZ9L02SL3100 |
| RHD4CZ9L02SL3300 |  | Warning tape and Backfill for Street Lighting Cables for Street Lighting Network - (RD-L-2)-Z9-L02-SL | 13d | 2027-04-08 | 2027-04-22 | RHD4CZ9L02SL3200 |
| RHD4CZ9L02SL3400 |  | Testing of Street Lighting Cables for Street Lighting Network - (RD-L-2)-Z9-L02-SL | 8d | 2027-04-24 | 2027-05-02 | RHD4CZ9L02SL3300, RHD4CZ9L02MV5400 |
|  | 8616 | **RHD4-02-002-L02-(SL)-Street Lighting Poles** |  | 2027-05-03 | 2027-06-27 |  |
| RHD4CZ9L02SL1100 |  | Excavation for RC Base for Lighting Poles for Street Lighting Network - (RD-L-2)-Z9-L02-SL | 8d | 2027-05-03 | 2027-05-11 | RHD4ENSDZ9APPSL170, RHD4CZ9L02SL3400, RHD4CZ9L02MV4200 |
| RHD4CZ9L02SL1200 |  | Installation for RC Base for Lighting Poles for Street Lighting Network - (RD-L-2)-Z9-L02-SL | 8d | 2027-05-12 | 2027-05-25 | RHD4CZ9L02SL1100 |
| RHD4CZ9L02SL1300 |  | Backfill for RC Base for Lighting Poles for Street Lighting Network - (RD-L-2)-Z9-L02-SL | 8d | 2027-05-26 | 2027-06-03 | RHD4CZ9L02SL1200 |
| RHD4CZ9L02SL1400 |  | Installation for Lighting Poles for Street Lighting Network - (RD-L-2)-Z9-L02-SL | 12d | 2027-06-05 | 2027-06-17 | RHD4PRSHLDOSSL1200, RHD4ENMSSL2000, RHD4ENMSSL2010, RHD4PRSHLSTAGSL1200, RHD4CZ9L02SL1300, RHD4CZ9L02SL3400 |
| RHD4CZ9L02SL1500 |  | Luminaire Installation for Lighting Poles for Street Lighting Network - (RD-L-2)-Z9-L02-SL | 8d | 2027-06-19 | 2027-06-27 | RHD4PRSHLDOSSL1300, RHD4PRSHLSTAGSL1300, RHD4CZ9L02SL1400 |
|  | 8617 | **RHD4-02-002-L02-(SL)-Street Lighting Feeder Pillars** |  | 2027-06-28 | 2027-07-04 |  |
| RHD4CZ9L02SL4100 |  | Leveling for Distribution Pillars for Street Lighting Network - (RD-L-2)-Z9-L02-SL | 2d | 2027-06-28 | 2027-06-29 | RHD4CZ9L02SL1500 |
| RHD4CZ9L02SL4200 |  | Lean Concrete for Distribution Pillars for Street Lighting Network - (RD-L-2)-Z9-L02-SL | 2d | 2027-06-30 | 2027-07-01 | RHD4CZ9L02SL4100 |
| RHD4CZ9L02SL4300 |  | Installation of Distribution Pillars for Street Lighting Network - (RD-L-2)-Z9-L02-SL | 2d | 2027-07-03 | 2027-07-04 | RHD4CZ9L02SL4200, RHD4CZ9L02SL1400 |
|  | 8618 | **RHD4-02-002-L02-(SL)-Street Lighting Earthing System** |  | 2027-07-05 | 2027-07-06 |  |
| RHD4CZ9L02SL6100 |  | Installation of Earthing for Lighting Poles and Fedder Pillers for Street Lighting Network - (RD-L-2)-Z9-L02-SL | 2d | 2027-07-05 | 2027-07-06 | RHD4ENMSER2000, RHD4ENMSER2010, RHD4CZ9L02SL4300 |
|  | 8624 | **RHD4-02-002-Z9-L02-Telecommunications Network - TC** |  | 2026-08-31 | 2027-04-21 |  |
|  | 8625 | **RHD4-02-002-L02-(TC)-Telecommunications Ducts** |  | 2027-03-15 | 2027-04-14 |  |
| RHD4CZ9L02TC2100 |  | Excavation of HDPE Ducts for Telecom Network - (RD-L-2)-Z9-L02-TC | 9d | 2027-03-15 | 2027-03-24 | RHD4ENSDZ9APPTC190, RHD4CZ9L02SL3100 SS |
| RHD4CZ9L02TC2200 |  | Installation of HDPE Ducts for Telecom Network - (RD-L-2)-Z9-L02-TC | 9d | 2027-03-25 | 2027-04-04 | RHD4PRSHLDOSTC1000, RHD4PRSHLSTAGTC1000, RHD4CZ9L02TC2100 |
| RHD4CZ9L02TC2400 |  | Backfilling of HDPE Ducts for Telecom Network - (RD-L-2)-Z9-L02-TC | 9d | 2027-04-05 | 2027-04-14 | RHD4CZ9L02TC2200 |
|  | 8626 | **RHD4-02-002-L02-(TC)-Telecommunications Manholes** |  | 2027-04-15 | 2027-04-21 |  |
| RHD4CZ9L02TC5100 |  | Excavation for Manholes for Telecom Network - (RD-L-2)-Z9-L02-TC | 3d | 2027-04-15 | 2027-04-18 | RHD4ENSDZ9APPTC190, RHD4CZ9L02TC2400 |
| RHD4CZ9L02TC5200 |  | Installation of Manholes for Telecom Network - (RD-L-2)-Z9-L02-TC | 3d | 2027-04-19 | 2027-04-21 | RHD4PRSHLDOSTC1200, RHD4PRSHLSTAGTC1200, RHD4CZ9L02TC5100, RHD4CZ9L02PT3202, RHD4CZ9L06ST1502 |
|  | 8627 | **RHD4-02-002-L02-(TC)-Telecomminications Road Crossings** |  | 2026-08-31 | 2026-09-08 |  |
| RHD4CZ9L02TC3100 |  | Excavation for Road Crossings for Telecom Network - (RD-L-2)-Z9-L02-TC | 2d | 2026-08-31 | 2026-09-01 | RHD4ENSDZ9APPTC190, RHD4CZ9L05ST7100 |
| RHD4CZ9L02TC3200 |  | Installation of Road Crossings for Telecom Network - (RD-L-2)-Z9-L02-TC | 2d | 2026-09-02 | 2026-09-03 | RHD4PRSHLDOSTC1100, RHD4PRSHLSTAGTC1100, RHD4CZ9L02TC3100 |
| RHD4CZ9L02TC3300 |  | Pouring of Road Crossings for Telecom Network - (RD-L-2)-Z9-L02-TC | 2d | 2026-09-05 | 2026-09-06 | RHD4CZ9L02TC3200 |
| RHD4CZ9L02TC3400 |  | Backfilling of Road Crossings for Telecom Network - (RD-L-2)-Z9-L02-TC | 2d | 2026-09-07 | 2026-09-08 | RHD4CZ9L02TC3300 |
|  | 8628 | **RHD4-02-002-Z9-L02-Information and Communication Technologies - ICT** |  | 2026-09-02 | 2027-06-24 |  |
|  | 8629 | **RHD4-02-002-L02-(ICT)-Information and Communication Technologies Ducts** |  | 2027-04-19 | 2027-06-01 |  |
| RHD4CZ9L02ICT2100 |  | Excavation of HDPE Ducts for ICT Network - (RD-L-2)-Z9-L02-ICT | 10d | 2027-04-19 | 2027-04-29 | RHD4ENSDZ9APPICT200, RHD4PRSHLDOSST1501, RHD4PRSHLDOSRD1300, RHD4PRSHLDOSST1504, RHD4PRSHLSTAGRD1300, RHD4CZ9L02TC5100 |
| RHD4CZ9L02ICT2200 |  | Installation of HDPE Ducts for ICT Network - (RD-L-2)-Z9-L02-ICT | 14d | 2027-05-01 | 2027-05-20 | RHD4PRSHLDOSICT1000, RHD4PRSHLSTAGICT1000, RHD4CZ9L02ICT2100 |
| RHD4CZ9L02ICT2400 |  | Backfilling of HDPE Ducts for ICT Network - (RD-L-2)-Z9-L02-ICT | 10d | 2027-05-22 | 2027-06-01 | RHD4CZ9L02ICT2200 |
|  | 8630 | **RHD4-02-002-L02-(ICT)-Information and Communication Technologies Manholes** |  | 2027-06-02 | 2027-06-24 |  |
| RHD4CZ9L02ICT5100 |  | Excavation for Manholes for ICT Network - (RD-L-2)-Z9-L02-ICT | 10d | 2027-06-02 | 2027-06-13 | RHD4ENSDZ9APPICT200, RHD4CZ9L02ICT2400 |
| RHD4CZ9L02ICT5200 |  | Installation of Manholes for ICT Network - (RD-L-2)-Z9-L02-ICT | 10d | 2027-06-14 | 2027-06-24 | RHD4PRSHLDOSICT1200, RHD4PRSHLSTAGICT1200, RHD4CZ9L02ICT5100 |
|  | 8631 | **RHD4-02-002-L02-(ICT)-Information and Communication Technologies Road Crossings** |  | 2026-09-02 | 2026-09-10 |  |
| RHD4CZ9L02ICT3100 |  | Excavation for Road Crossings for ICT Network - (RD-L-2)-Z9-L02-ICT | 2d | 2026-09-02 | 2026-09-03 | RHD4ENSDZ9APPICT200, RHD4CZ9L02TC3100 |
| RHD4CZ9L02ICT3200 |  | Installation of Road Crossings for ICT Network - (RD-L-2)-Z9-L02-ICT | 2d | 2026-09-05 | 2026-09-06 | RHD4PRSHLDOSICT1100, RHD4PRSHLSTAGICT1100, RHD4CZ9L02ICT3100, RHD4CZ9L02TC3200 |
| RHD4CZ9L02ICT3300 |  | Pouring of Road Crossings for ICT Network - (RD-L-2)-Z9-L02-ICT | 2d | 2026-09-07 | 2026-09-08 | RHD4CZ9L02ICT3200 |
| RHD4CZ9L02ICT3400 |  | Backfilling of Road Crossings for ICT Network - (RD-L-2)-Z9-L02-ICT | 2d | 2026-09-09 | 2026-09-10 | RHD4CZ9L02ICT3300 |
|  | 8619 | **RHD4-02-002-Z9-L02-Landscape Network - LS** |  |  |  |  |
|  | 8620 | **RHD4-02-002-L02-(LS)-Landscape Lighting cables** |  |  |  |  |
|  | 8621 | **RHD4-02-002-L02-(LS)-Landscape Feeder Pillars** |  |  |  |  |
|  | 8622 | **RHD4-02-002-L02-(LS)-Landscape Bollard Poles** |  |  |  |  |
|  | 8623 | **RHD4-02-002-L02-(LS)-Landscape Feeder Pillars Earthing** |  |  |  |  |
|  | 8632 | **RHD4-02-002-Z9-L02-Security Network - CCTV** |  | 2027-06-26 | 2027-07-26 |  |
|  | 8633 | **RHD4-02-002-L02-(CCTV)-Civil Works** |  | 2027-06-26 | 2027-06-30 |  |
| RHD4CZ9L02CCTV2100 |  | Civil Works for Security Network - (RD-L-2)-Z9-L02-CCTV | 5d | 2027-06-26 | 2027-06-30 | RHD4CZ9L02ICT5200 |
|  | 8634 | **RHD4-02-002-L02-(CCTV)-CCTV Poles** |  | 2027-07-01 | 2027-07-12 |  |
| RHD4CZ9L02CCTV1100 |  | Excavation for RC Base for CCTV Poles for Security Network - (RD-L-2)-Z9-L02-CCTV | 2d | 2027-07-01 | 2027-07-03 | RHD4ENSDZ9APPCCTV210, RHD4CZ9L02CCTV2100 |
| RHD4CZ9L02CCTV1200 |  | Installation for RC Base for CCTV Poles for Security Network - (RD-L-2)-Z9-L02-CCTV | 2d | 2027-07-04 | 2027-07-05 | RHD4PRSHLSTAGLS1000, RHD4PRSHLPOSL1300 SS, RHD4GNPPMAT1100, RHD4ENMARSUBSL400 SS, RHD4GNPPSD1100, RHD4ENSDZ9SUBCCTV210 SS, RHD4CZ9L02CCTV1100 |
| RHD4CZ9L02CCTV1300 |  | Backfill for RC Base for CCTV Poles for Security Network - (RD-L-2)-Z9-L02-CCTV | 2d | 2027-07-06 | 2027-07-07 | RHD4CZ9L02CCTV1200 |
| RHD4CZ9L02CCTV1400 |  | Installation for CCTV Poles for Security Network - (RD-L-2)-Z9-L02-CCTV | 2d | 2027-07-08 | 2027-07-10 | RHD4PRSHLDOSCCTV1000, RHD4PRSHLSTACCTV1000, RHD4CZ9L02CCTV1300 |
| RHD4CZ9L02CCTV1500 |  | Protection post Installation for CCTV Poles for Security Network - (RD-L-2)-Z9-L02-CCTV | 2d | 2027-07-11 | 2027-07-12 | RHD4CZ9L02CCTV1400 |
|  | 8635 | **RHD4-02-002-L02-(CCTV)-Camera** |  | 2027-07-13 | 2027-07-14 |  |
| RHD4CZ9L02CCTV3100 |  | Installation for Cameras for Security Network - (RD-L-2)-Z9-L02-CCTV | 2d | 2027-07-13 | 2027-07-14 | RHD4PRSHLDOSCCTV1100, RHD4PRSHLSTACCTV1100, RHD4CZ9L02CCTV1400, RHD4CZ9L02CCTV4100 |
|  | 8636 | **RHD4-02-002-L02-(CCTV)-Power and Infrastructure** |  | 2027-07-11 | 2027-07-12 |  |
| RHD4CZ9L02CCTV4100 |  | Installation of Power outlet, UPS and midspan for PTZ Camerafor Cameras for Security Network - (RD-L-2)-Z9-L02-CCTV | 2d | 2027-07-11 | 2027-07-12 | RHD4PRSHLDOSCCTV1300, RHD4PRSHLSTACCTV1300, RHD4CZ9L02CCTV1400 |
|  | 8638 | **RHD4-02-002-L02-(CCTV)-CCTV Panels and Components** |  | 2027-07-15 | 2027-07-26 |  |
| RHD4CZ9L02CCTV6100 |  | Installation for CCTV Panels for Security Network - (RD-L-2)-Z9-L02-CCTV | 10d | 2027-07-15 | 2027-07-26 | RHD4PRSHLDOSCCTV1200, RHD4PRSHLSTACCTV1200, RHD4PRLOLSTACCTV1001, RHD4CZ9L02CCTV3100 |
|  | 5622 | **RHD4-02-002-Z7** |  | 2026-01-29 | 2027-11-23 |  |
|  | 6190 | **RHD4-02-002-Z7-C032** |  | 2026-08-17 | 2027-03-20 |  |
|  | 6265 | **RHD4-02-002-Z7-C032-Crossings Potable Network - PTCr** |  |  |  |  |
|  | 6268 | **RHD4-02-002-C032-(PTCr)-HDPE Pipes - 200 mm diameter** |  |  |  |  |
|  | 6271 | **RHD4-02-002-C032-(PTCr)-Gate Valves (Direct Buried)** |  |  |  |  |
|  | 6278 | **RHD4-02-002-C032-(PTCr)-Fire Hydrant** |  |  |  |  |

| ID | WBS | Task | Duration | Start | Finish | Predecessors |
| --- | --- | --- | --- | --- | --- | --- |
|  | 6312 | **RHD4-02-002-Z7-C032-Crossings Irrigation Network - IRRC** |  |  |  |  |
|  | 6313 | **RHD4-02-002-C032-(IRRC)-HDPE Pipes - 160 mm diameter** |  |  |  |  |
|  | 6321 | **RHD4-02-002-C032-(IRRC)-Gate Valves (Direct Buried)** |  |  |  |  |
|  | 6324 | **RHD4-02-002-C032-(IRRC)-Wash out Chamber** |  |  |  |  |
|  | 6325 | **RHD4-02-002-C032-(IRRC)-Wash out Valves** |  |  |  |  |
|  | 6326 | **RHD4-02-002-C032-(IRRC)-Air Valve Chamber** |  |  |  |  |
|  | 6327 | **RHD4-02-002-C032-(IRRC)-Air Valves** |  |  |  |  |
|  | 6369 | **RHD4-02-002-Z7-C032-Road Works - RD** |  | 2026-08-30 | 2027-03-20 |  |
|  | 6370 | **RHD4-02-002-C032-(RD)-Subgrade** |  | 2026-08-30 | 2026-09-05 |  |
| RHD4CZ7C032RD1100 |  | Supply, lay and compaction subgrade compacted thickness 300 mm for Roads - (RD-C-3/2)-Z7-C032-RD | 6d | 2026-08-30 | 2026-09-05 | RHD4ENSDZ7APPEW100, RHD4ENSDZ7APPRD220, RHD4CZ7C032ICT3400, RHD4CZ7C032TC3400, RHD4CZ4L09ST3502, RHD4CZ5L08ST7500 |
|  | 6371 | **RHD4-02-002-C032-(RD)-Aggregate Base Course** |  | 2026-09-06 | 2026-09-10 |  |
| RHD4CZ7C032RD2100 |  | Supply, lay and compaction Aggregate base course compacted thickness 300 mmfor Roads - (RD-C-3/2)-Z7-C032-RD | 5d | 2026-09-06 | 2026-09-10 | RHD4PRSHLDOSRD1000, RHD4PRSHLSTAGRD1000, RHD4CZ7C032RD1100, RHD4CZ5C051ST7500 |
|  | 6372 | **RHD4-02-002-C032-(RD)-Bituminous base course Two Layers, including (MC1)&(RC2)** |  | 2026-09-12 | 2027-03-06 |  |
| RHD4CZ7C032RD3100 |  | Supply, lay and Asphaltic base course including Prime Coat (MC1) for 1st Layer - (RD-C-3/2)-Z7-C032-RD | 4d | 2026-09-12 | 2026-09-15 | RHD4PRSHLDOSRD1100, RHD4ENMSASPH2000, RHD4ENMSASPH2010, RHD4PRSHLSTAGRD1100, RHD4CZ7C032RD2100 |
| RHD4CZ7C032RD3200 |  | Supply, lay and Asphaltic base course including Tack Coat (RC2) for 2nd Layer - (RD-C-3/2)-Z7-C032-RD | 4d | 2027-03-02 | 2027-03-06 | RHD4PRSHLDOSRD1100, RHD4PRSHLSTAGRD1100, RHD4CZ7C032CCTV4200 |
|  | 6374 | **RHD4-02-002-C032-(RD)-Precast Concrete Curb** |  | 2027-03-07 | 2027-03-13 |  |
| RHD4CZ7C032RD5100 |  | Supply and installation Precast Concrete Kerb for Roads - (RD-C-3/2)-Z7-C032-RD | 3d | 2027-03-07 | 2027-03-13 | RHD4PRSHLDOSRD1200, RHD4ENMSRD2000, RHD4ENMSRD2010, RHD4PRSHLSTAGRD1200, RHD4CZ7C032RD3200 |
|  | 6377 | **RHD4-02-002-C032-(RD)-Traffic Signage** |  | 2027-03-14 | 2027-03-20 |  |
| RHD4CZ7C032RD8100 |  | Installation of Traffic Signage for Road Network - (RD-C-3/2)-Z7-C032-RD | 6d | 2027-03-14 | 2027-03-20 | RHD4PRSHLDOSRD1600, RHD4PRSHLSTAGRD1600, RHD4CZ7C032RD5100 |
|  | 6375 | **RHD4-02-002-C032-(RD)-Precast Interlocking Block Pavers** |  |  |  |  |
|  | 6373 | **RHD4-02-002-C032-(RD)-Bituminous concrete wearing course including tack coat (RC2)** |  | 2027-03-14 | 2027-03-15 |  |
| RHD4CZ7C032RD4100 |  | Supply, lay and compaction Asphaltic wearing course including tack Coat (RC2)for Road Network - (RD-C-3/2)-Z7-C032-RD | 2d | 2027-03-14 | 2027-03-15 | RHD4CZ7C032RD5100 |
|  | 6376 | **RHD4-02-002-C032-(RD)-Pavement Marking** |  | 2027-03-16 | 2027-03-20 |  |
| RHD4CZ7C032RD7100 |  | Pavement Markings for Road Network - (RD-C-3/2)-Z7-C032-RD | 4d | 2027-03-16 | 2027-03-20 | RHD4PRSHLDOSRD1500, RHD4PRSHLSTAGRD1500, RHD4CZ7C032RD4100 |
|  | 6194 | **RHD4-02-002-Z7-C032-Storm Network - ST** |  |  |  |  |
|  | 6213 | **RHD4-02-002-C032-(ST)-MH Works - 2000 mm diameter** |  |  |  |  |
|  | 6212 | **RHD4-02-002-C032-(ST)-MH Works - 1500 mm diameter** |  |  |  |  |
|  | 6211 | **RHD4-02-002-C032-(ST)-MH Works - 1200 mm diameter** |  |  |  |  |
|  | 6208 | **RHD4-02-002-C032-(ST)-GRP Pipes - 1800 mm diameter** |  |  |  |  |
|  | 6207 | **RHD4-02-002-C032-(ST)-GRP Pipes - 1600 mm diameter** |  |  |  |  |
|  | 6206 | **RHD4-02-002-C032-(ST)-GRP Pipes - 1500 mm diameter** |  |  |  |  |
|  | 6200 | **RHD4-02-002-C032-(ST)-GRP Pipes - 900 mm diameter** |  |  |  |  |
|  | 6197 | **RHD4-02-002-C032-(ST)-GRP Pipes - 600 mm diameter** |  |  |  |  |
|  | 6196 | **RHD4-02-002-C032-(ST)-GRP Pipes - 500 mm diameter** |  |  |  |  |
|  | 6195 | **RHD4-02-002-C032-(ST)-GRP Pipes - 400 mm diameter** |  |  |  |  |
|  | 6209 | **RHD4-02-002-C032-(ST)-UPVC Pipes - 300 mm diameter** |  |  |  |  |
|  | 6217 | **RHD4-02-002-C032-(ST)-Concrete Encasement** |  |  |  |  |
|  | 6218 | **RHD4-02-002-Z7-C032-Catch Basin - ST** |  |  |  |  |
|  | 6219 | **RHD4-02-002-C032-(ST)-Single Catch Basin Works** |  |  |  |  |
|  | 6280 | **RHD4-02-002-Z7-C032-Potable Network - PT** |  | 2027-02-10 | 2027-03-18 |  |
|  | 6283 | **RHD4-02-002-C032-(PT)-HDPE Pipes - 200 mm diameter** |  | 2027-02-10 | 2027-02-28 |  |
| RHD4CZ7C032PT1102 |  | Excavation works for HDPE Pipline 200 mm - (RD-C-3/2)-Z7-C032-PT | 2d | 2027-02-10 | 2027-02-11 | RHD4ENSDZ7APPPT130, RHD4ENMSPT2000, RHD4CZ7C032RW3000, RHD4CZ7A012ST1106, RHD4CZ7A012SW1500, RHD4ENMSEW2000, RHD4ENMSEW2010, RHD4ENSDZ7APPEW100 SS, RHD4ENSDZ8APPEW100 SS |
| RHD4CZ7C032PT1202 |  | Bedding works for HDPE Pipline 200 mm - (RD-C-3/2)-Z7-C032-PT | 2d | 2027-02-13 | 2027-02-14 | RHD4CZ7C032PT1102 |
| RHD4CZ7C032PT1302 |  | Installing for HDPE Pipline 200 mm - (RD-C-3/2)-Z7-C032-PT | 2d | 2027-02-15 | 2027-02-16 | RHD4PRSHLDOSPT1000, RHD4PRSHLSTAGPT1000, RHD4CZ7C032PT1202 |
| RHD4CZ7C032PT1402 |  | Primary Test for HDPE Pipline 200 mm - (RD-C-3/2)-Z7-C032-PT | 2d | 2027-02-24 | 2027-02-25 | RHD4CZ7C032PT5100, RHD4CZ7C032PT1302 |
| RHD4CZ7C032PT1502 |  | Backfilling and warning tape works for HDPE Pipline 200 mm - (RD-C-3/2)-Z7-C032-PT | 2d | 2027-02-27 | 2027-02-28 | RHD4CZ7C032PT1402 |
|  | 6282 | **RHD4-02-002-C032-(PT)-HDPE Pipes - 160 mm diameter** |  | 2027-02-13 | 2027-02-28 |  |
| RHD4CZ7C032PT1101 |  | Excavation works for HDPE Pipline 160 mm - (RD-C-3/2)-Z7-C032-PT | 2d | 2027-02-13 | 2027-02-14 | RHD4ENSDZ7APPPT130, RHD4ENMSPT2000, RHD4CZ7C032PT1102 |
| RHD4CZ7C032PT1201 |  | Bedding works for HDPE Pipline 160 mm - (RD-C-3/2)-Z7-C032-PT | 2d | 2027-02-15 | 2027-02-16 | RHD4CZ7C032PT1101 |
| RHD4CZ7C032PT1301 |  | Installing for HDPE Pipline 160 mm - (RD-C-3/2)-Z7-C032-PT | 2d | 2027-02-17 | 2027-02-18 | RHD4PRSHLDOSPT1000, RHD4PRSHLSTAGPT1000, RHD4CZ7C032PT1201 |
| RHD4CZ7C032PT1401 |  | Primary Test for HDPE Pipline 160 mm - (RD-C-3/2)-Z7-C032-PT | 2d | 2027-02-24 | 2027-02-25 | RHD4CZ7C032PT1301, RHD4CZ7C032PT5100 |
| RHD4CZ7C032PT1501 |  | Backfilling and warning tape works for HDPE Pipline 160 mm - (RD-C-3/2)-Z7-C032-PT | 2d | 2027-02-27 | 2027-02-28 | RHD4CZ7C032PT1401 |
|  | 6286 | **RHD4-02-002-C032-(PT)-Gate Valves (Direct Buried)** |  | 2027-02-17 | 2027-03-02 |  |
| RHD4CZ7C032PT3100 |  | Installation for Direct Buried Gate Valves - (RD-C-3/2)-Z7-C032-PT | 2d | 2027-02-17 | 2027-02-18 | RHD4PRSHLDOSPT1200, RHD4PRSHLSTAGPT1200, RHD4CZ7C032PT1302 FF, RHD4CZ7C032PT1301 FF, RHD4CZ7C032PT1302 SS, RHD4CZ7C032PT1301 SS |
| RHD4CZ7C032PT3200 |  | Stem and Service box for Direct Buried Gate Valves - (RD-C-3/2)-Z7-C032-PT | 2d | 2027-03-01 | 2027-03-02 | RHD4PRSHLDOSPT1300, RHD4PRSHLSTAGPT1300, RHD4CZ7C032PT3100, RHD4CZ7C032PT1502, RHD4CZ7C032PT1501 |
|  | 6289 | **RHD4-02-002-C032-(PT)-Wash out Valve Chambers** |  | 2027-02-20 | 2027-03-01 |  |
| RHD4CZ7C032PT2101 |  | Excavation and Bedding for Wash out Valve Chambers for Potable Water Network - (RD-C-3/2)-Z7-C032-PT | 2d | 2027-02-20 | 2027-02-21 | RHD4ENSDZ7APPPT130, RHD4CZ7C032PT1301 |
| RHD4CZ7C032PT2201 |  | PC works for Wash out Valve Chambers for Potable Water Network - (RD-C-3/2)-Z7-C032-PT | 2d | 2027-02-23 | 2027-02-24 | RHD4CZ7C032PT2101 |
| RHD4CZ7C032PT2301 |  | Installation for Wash out Valve Chambers for Potable Water Network - (RD-C-3/2)-Z7-C032-PT | 2d | 2027-02-25 | 2027-02-27 | RHD4PRSHLDOSPT1100, RHD4PRSHLDOSPT1400, RHD4PRSHLSTAGPT1100, RHD4PRSHLSTAGPT1400, RHD4CZ7C032PT2201 |
| RHD4CZ7C032PT2401 |  | Backfilling works for Wash out Valve Chambers for Potable Water Network - (RD-C-3/2)-Z7-C032-PT | 2d | 2027-02-28 | 2027-03-01 | RHD4CZ7C032PT2301 |
|  | 6290 | **RHD4-02-002-C032-(PT)-Wash out Valves** |  | 2027-02-28 | 2027-03-03 |  |
| RHD4CZ7C032PT3102 |  | Installation for Wash out Valves for Potable Water Network - (RD-C-3/2)-Z7-C032-PT | 2d | 2027-02-28 | 2027-03-01 | RHD4PRSHLDOSPT1200, RHD4PRSHLSTAGPT1200, RHD4CZ7C032PT2301 |
| RHD4CZ7C032PT3202 |  | Stem and Service box for Wash out Valves for Potable Water Network - (RD-C-3/2)-Z7-C032-PT | 2d | 2027-03-02 | 2027-03-03 | RHD4PRSHLDOSPT1300, RHD4PRSHLSTAGPT1300, RHD4CZ7C032PT3102, RHD4CZ7C032PT2401 |
|  | 6293 | **RHD4-02-002-C032-(PT)-Fire Hydrant** |  | 2027-03-04 | 2027-03-18 |  |
| RHD4CZ7C032PT4100 |  | Excavation and Bedding and Pipe Installation for Fire Hydrant - (RD-C-3/2)-Z7-C032-PT | 2d | 2027-03-04 | 2027-03-06 | RHD4ENSDZ7APPPT130, RHD4CZ7C032PT3202 |
| RHD4CZ7C032PT4200 |  | Valve Installation for Fire Hydrant - (RD-C-3/2)-Z7-C032-PT | 2d | 2027-03-07 | 2027-03-08 | RHD4CZ7C032PT4100 |
| RHD4CZ7C032PT4300 |  | Stem for Fire Hydrant - (RD-C-3/2)-Z7-C032-PT | 2d | 2027-03-13 | 2027-03-14 | RHD4CZ7C032PT4200 |
| RHD4CZ7C032PT4400 |  | Fire Installation for Fire Hydrant - (RD-C-3/2)-Z7-C032-PT | 2d | 2027-03-15 | 2027-03-16 | RHD4PRSHLDOSPT1500, RHD4PRSHLSTAGPT1500, RHD4CZ7C032PT4300, RHD4CZ7C032PT2401 |
| RHD4CZ7C032PT4500 |  | Protection Barriers for Fire Hydrant - (RD-C-3/2)-Z7-C032-PT | 2d | 2027-03-17 | 2027-03-18 | RHD4CZ7C032PT4400, RHD4CZ7C032PT3200 |
|  | 6294 | **RHD4-02-002-C032-(PT)-Concrete Encasement** |  | 2027-02-17 | 2027-02-23 |  |

| ID | WBS | Task | Duration | Start | Finish | Predecessors |
| --- | --- | --- | --- | --- | --- | --- |
| RHD4CZ7C032PT5100 |  | Pipe Encasement for Potable Pipelines - (RD-C-3/2)-Z7-C032-PT | 5d | 2027-02-17 | 2027-02-23 | RHD4CZ7C032PT1302 FF, RHD4CZ7C032PT1301 FF, RHD4CZ7C032PT1302 SS, RHD4CZ7C032PT1301 SS, RHD4CZ7C032PT1202, RHD4CZ7C032PT1201 |
|  | 1755 | **RHD4-02-002-Z7-C032-Irrigation Network - IRR** |  | 2027-02-15 | 2027-03-14 |  |
|  | 1770 | **RHD4-02-002-C032-(IRR)-Air Valves** |  | 2027-02-23 | 2027-03-08 |  |
| RHD4CZ7C032IRR3103 |  | Installation for Air Valves for Irrigation Network - (RD-C-3/2)-Z7-C032-IRR | 2d | 2027-02-23 | 2027-02-24 | RHD4CZ7C032IRR2302 |
| RHD4CZ7C032IRR3203 |  | Stem and Service box for Air Valves for Irrigation Network - (RD-C-3/2)-Z7-C032-IRR | 2d | 2027-03-07 | 2027-03-08 | RHD4CZ7C032IRR3103, RHD4CZ7C032IRR2402 |
|  | 6107 | **RHD4-02-002-C032-(IRR)-HDPE Pipes - 160 mm diameter** |  | 2027-02-15 | 2027-03-08 |  |
| RHD4CZ7C032IRR1100 |  | Excavation works for HDPE Pipline 160 mm - (RD-C-3/2)-Z7-C032-IRR | 4d | 2027-02-15 | 2027-02-18 | RHD4CZ7C032PT1301 FF |
| RHD4CZ7C032IRR1200 |  | Bedding works for HDPE Pipline 160 mm - (RD-C-3/2)-Z7-C032-IRR | 4d | 2027-02-20 | 2027-02-24 | RHD4CZ7C032IRR1100 |
| RHD4CZ7C032IRR1300 |  | Installing for HDPE Pipline 160 mm - (RD-C-3/2)-Z7-C032-IRR | 4d | 2027-02-25 | 2027-03-01 | RHD4CZ7C032IRR1200 |
| RHD4CZ7C032IRR1400 |  | Primary Test for HDPE Pipline 160 mm - (RD-C-3/2)-Z7-C032-IRR | 2d | 2027-03-02 | 2027-03-03 | RHD4CZ7C032IRR1300 |
| RHD4CZ7C032IRR1500 |  | Backfilling and warning tape works for HDPE Pipline 160 mm - (RD-C-3/2)-Z7-C032-IRR | 4d | 2027-03-04 | 2027-03-08 | RHD4CZ7C032IRR1400 |
|  | 6115 | **RHD4-02-002-C032-(IRR)-Gate Valves (Direct Buried)** |  | 2027-02-28 | 2027-03-14 |  |
| RHD4CZ7C032IRR3100 |  | Installation for Direct Buried Gate Valves - (RD-C-3/2)-Z7-C032-IRR | 2d | 2027-02-28 | 2027-03-01 | RHD4CZ7C032IRR1300 SS, RHD4CZ7C032IRR1300 FF |
| RHD4CZ7C032IRR3200 |  | Stem and Service box for Direct Buried Gate Valves - (RD-C-3/2)-Z7-C032-IRR | 2d | 2027-03-13 | 2027-03-14 | RHD4CZ7C032IRR3100, RHD4CZ7C032IRR1500 |
|  | 6685 | **RHD4-02-002-C032-(IRR)-Wash out Chamber** |  | 2027-02-15 | 2027-02-24 |  |
| RHD4CZ7C032IRR2101 |  | Excavation and Bedding for Wash out Chamber for Irrigation Network - (RD-C-3/2)-Z7-C032-IRR | 2d | 2027-02-15 | 2027-02-16 | RHD4CZ7C032IRR1100 SS |
| RHD4CZ7C032IRR2201 |  | PC works for Wash out Chamber for Irrigation Network - (RD-C-3/2)-Z7-C032-IRR | 2d | 2027-02-17 | 2027-02-18 | RHD4CZ7C032IRR2101 |
| RHD4CZ7C032IRR2301 |  | Installation for Wash out Chamber for Irrigation Network - (RD-C-3/2)-Z7-C032-IRR | 2d | 2027-02-20 | 2027-02-21 | RHD4CZ7C032IRR2201 |
| RHD4CZ7C032IRR2401 |  | Backfilling works for Wash out Chamber for Irrigation Network - (RD-C-3/2)-Z7-C032-IRR | 2d | 2027-02-23 | 2027-02-24 | RHD4CZ7C032IRR2301 |
|  | 6686 | **RHD4-02-002-C032-(IRR)-Wash out Valves** |  | 2027-02-23 | 2027-02-27 |  |
| RHD4CZ7C032IRR3102 |  | Installation for Wash out Valve for Irrigation Network - (RD-C-3/2)-Z7-C032-IRR | 2d | 2027-02-23 | 2027-02-24 | RHD4CZ7C032IRR2301 |
| RHD4CZ7C032IRR3202 |  | Stem and Service box for Wash out Valve for Irrigation Network - (RD-C-3/2)-Z7-C032-IRR | 2d | 2027-02-25 | 2027-02-27 | RHD4CZ7C032IRR3102, RHD4CZ7C032IRR2401 |
|  | 1769 | **RHD4-02-002-C032-(IRR)-Air Valve Chamber** |  | 2027-02-15 | 2027-03-06 |  |
| RHD4CZ7C032IRR2102 |  | Excavation and Bedding for Valve Chamber for Irrigation Network - (RD-C-3/2)-Z7-C032-IRR | 2d | 2027-02-15 | 2027-02-16 | RHD4CZ7C032IRR2101 SS |
| RHD4CZ7C032IRR2202 |  | PC works for Valve Chamber for Irrigation Network - (RD-C-3/2)-Z7-C032-IRR | 2d | 2027-02-17 | 2027-02-18 | RHD4CZ7C032IRR2102 |
| RHD4CZ7C032IRR2302 |  | Installation for Valve Chamber for Irrigation Network - (RD-C-3/2)-Z7-C032-IRR | 2d | 2027-02-20 | 2027-02-21 | RHD4CZ7C032IRR2202 |
| RHD4CZ7C032IRR2402 |  | Backfilling works for Valve Chamber for Irrigation Network - (RD-C-3/2)-Z7-C032-IRR | 2d | 2027-03-04 | 2027-03-06 | RHD4CZ7C032IRR2302, RHD4CZ7C032IRR5100 |
|  | 1771 | **RHD4-02-002-C032-(IRR)-Concrete Encasement** |  | 2027-03-02 | 2027-03-03 |  |
| RHD4CZ7C032IRR5100 |  | Pipe Encasement for Irrigation Pipelines - (RD-C-3/2)-Z7-C032-IRR | 2d | 2027-03-02 | 2027-03-03 | RHD4CZ7C032IRR1300 |
|  | 6329 | **RHD4-02-002-Z7-C032-Medium Voltage Network - MV** |  | 2026-09-16 | 2027-03-13 |  |
|  | 6330 | **RHD4-02-002-C032-(MV)-Medium Voltage cable trench** |  | 2027-02-03 | 2027-03-13 |  |
| RHD4CZ7C032MV1100 |  | Excavation for Medium Voltage Trench - (RD-C-3/2)-Z7-C032-MV | 6d | 2027-02-03 | 2027-02-09 | RHD4ENSDZ7APPMV150, RHD4CZ7C032RD3100, RHD4CZ8A011MV1100 |
| RHD4CZ7C032MV1200 |  | Trench Backfilling for Medium Voltage Network - (RD-C-3/2)-Z7-C032-MV | 6d | 2027-03-03 | 2027-03-13 | RHD4CZ7C032MV3300 |
|  | 6331 | **RHD4-02-002-C032-(MV)-Medium Voltage duct banks** |  | 2026-09-16 | 2026-10-21 |  |
| RHD4CZ7C032MV2100 |  | Excavation of Duct Banks for Medium Voltage Network - (RD-C-3/2)-Z7-C032-MV | 8d | 2026-09-16 | 2026-09-26 | RHD4ENSDZ7APPMV150, RHD4CZ7C032RD3100 |
| RHD4CZ7C032MV2200 |  | Installation of Duct Banks for Medium Voltage Network - (RD-C-3/2)-Z7-C032-MV | 11d | 2026-09-27 | 2026-10-08 | RHD4PRSHLDOSMV1000, RHD4PRSHLSTAGMV1000, RHD4CZ7C032MV2100 |
| RHD4CZ7C032MV2300 |  | Pouring of Duct Banks for Medium Voltage Network - (RD-C-3/2)-Z7-C032-MV | 8d | 2026-10-10 | 2026-10-18 | RHD4CZ7C032MV2200 |
| RHD4CZ7C032MV2400 |  | Backfilling of Duct Banks for Medium Voltage Network - (RD-C-3/2)-Z7-C032-MV | 3d | 2026-10-19 | 2026-10-21 | RHD4CZ7C032MV2300 |
|  | 6332 | **RHD4-02-002-C032-(MV)-Medium Voltage cables 3Cx 500 mm²** |  | 2027-02-10 | 2027-03-02 |  |
| RHD4CZ7C032MV3100 |  | Installation of Medium Voltage Cables 3Cx 500 mm² - (RD-C-3/2)-Z7-C032-MV | 7d | 2027-02-10 | 2027-02-17 | RHD4PRSHLDOSMV1100, RHD4ENMSMV2000, RHD4ENMSMV2010, RHD4PRSHLSTAGMV1100, RHD4CZ7C032MV1100 |
| RHD4CZ7C032MV3200 |  | Joints Installation of Medium Voltage Cables 3Cx 500 mm² - (RD-C-3/2)-Z7-C032-MV | 3d | 2027-02-18 | 2027-02-21 | RHD4PRSHLDOSMV1300, RHD4PRSHLSTAGMV1300, RHD4CZ7C032MV3100, RHD4CZ5A014IRR1503 |
| RHD4CZ7C032MV3300 |  | Testing of Medium Voltage Cables 3Cx 500 mm² - (RD-C-3/2)-Z7-C032-MV | 7d | 2027-02-23 | 2027-03-02 | RHD4CZ7C032MV3200 |
|  | 6336 | **RHD4-02-002-Z7-C032-Low Voltage Network - LV** |  | 2026-10-19 | 2026-11-03 |  |
|  | 6337 | **RHD4-02-002-C032-(LV)-Low Voltage duct banks** |  |  |  |  |
|  | 6338 | **RHD4-02-002-C032-(LV)-Low Voltage Drawpit** |  | 2026-10-19 | 2026-10-24 |  |
| RHD4CZ7C032LV5100 |  | Excavation of Drawpit size 900x900x1000mm for Low Voltage Network - (RD-C-3/2)-Z7-C032-LV | 3d | 2026-10-19 | 2026-10-21 | RHD4ENSDZ7APPLV160, RHD4CZ5C051PT1500 SS |
| RHD4CZ7C032LV5200 |  | Installation of Drawpit size 900x900x1000mm for Low Voltage Network - (RD-C-3/2)-Z7-C032-LV | 2d | 2026-10-22 | 2026-10-24 | RHD4PRSHLDOSLV1400, RHD4PRSHLSTAGLV1400, RHD4CZ7C032LV5100 |
|  | 6339 | **RHD4-02-002-C032-(LV)-Low Voltage cables** |  | 2026-10-25 | 2026-11-03 |  |
| RHD4CZ7C032LV3100 |  | Excavation for Low Voltage Cables for Low Voltage Network - (RD-C-3/2)-Z7-C032-LV | 3d | 2026-10-25 | 2026-10-27 | RHD4ENSDZ7APPLV160, RHD4CZ7C032LV5200 |
| RHD4CZ7C032LV3200 |  | Cable Laying of Low Voltage Cables for Low Voltage Network - (RD-C-3/2)-Z7-C032-LV | 2d | 2026-10-28 | 2026-10-29 | RHD4PRSHLDOSLV1100, RHD4ENMSLV2000, RHD4ENMSLV2010, RHD4PRSHLSTAGLV1100, RHD4CZ7C032LV3100 |
| RHD4CZ7C032LV3300 |  | Warning tape and Backfill for Low Voltage Cables for Low Voltage Network - (RD-C-3/2)-Z7-C032-LV | 2d | 2026-10-31 | 2026-11-01 | RHD4CZ7C032LV3200 |
| RHD4CZ7C032LV3400 |  | Testing of Low Voltage Cables for Low Voltage Network - (RD-C-3/2)-Z7-C032-LV | 2d | 2026-11-02 | 2026-11-03 | RHD4CZ7C032LV3300, RHD4CZ7C032MV2400 |
|  | 4259 | **RHD4-02-002-C032-(LV)-Low Voltage Distribution Pillars** |  |  |  |  |
|  | 6342 | **RHD4-02-002-Z7-C032-Street Lighting Network - SL** |  | 2026-09-27 | 2026-12-03 |  |
|  | 6343 | **RHD4-02-002-C032-(SL)-Street Lighting duct banks** |  | 2026-09-27 | 2026-10-14 |  |
| RHD4CZ7C032SL2100 |  | Excavation of Duct Banks for Street Lighting Network - (RD-C-3/2)-Z7-C032-SL | 4d | 2026-09-27 | 2026-09-30 | RHD4ENSDZ7APPSL170, RHD4CZ5C051SW3300 |
| RHD4CZ7C032SL2200 |  | Installation of Duct Banks for Street Lighting Network - (RD-C-3/2)-Z7-C032-SL | 5d | 2026-10-01 | 2026-10-06 | RHD4PRSHLDOSSL1000, RHD4PRSHLSTAGSL1000, RHD4CZ7C032SL2100 |
| RHD4CZ7C032SL2300 |  | Pouring of Duct Banks for Street Lighting Network - (RD-C-3/2)-Z7-C032-SL | 4d | 2026-10-07 | 2026-10-11 | RHD4CZ7C032SL2200 |
| RHD4CZ7C032SL2400 |  | Backfilling of Duct Banks for Street Lighting Network - (RD-C-3/2)-Z7-C032-SL | 3d | 2026-10-12 | 2026-10-14 | RHD4CZ7C032SL2300 |
|  | 6344 | **RHD4-02-002-C032-(SL)-Street Lighting Drawpit** |  | 2026-11-04 | 2026-11-08 |  |
| RHD4CZ7C032SL5100 |  | Excavation of Drawpit size 600x600x900mm for Street Lighting Network - (RD-C-3/2)-Z7-C032-SL | 2d | 2026-11-04 | 2026-11-05 | RHD4ENSDZ7APPSL170, RHD4CZ7C032SL2300, RHD4CZ7C032LV3400, RHD4CZ9C071ST1505, RHD4CZ7C013MV3300 |
| RHD4CZ7C032SL5200 |  | Installation of Drawpit size 600x600x900mm for Street Lighting Network - (RD-C-3/2)-Z7-C032-SL | 2d | 2026-11-07 | 2026-11-08 | RHD4PRSHLDOSSL1400, RHD4PRSHLSTAGSL1400, RHD4CZ7C032SL5100 |
|  | 6345 | **RHD4-02-002-C032-(SL)-Street Lighting cables** |  | 2026-11-09 | 2026-11-18 |  |
| RHD4CZ7C032SL3100 |  | Excavation for Street Lighting Cables for Street Lighting Network - (RD-C-3/2)-Z7-C032-SL | 3d | 2026-11-09 | 2026-11-11 | RHD4ENSDZ7APPSL170, RHD4CZ7C032SL5200 |
| RHD4CZ7C032SL3200 |  | Cable Laying of Street Lighting Cables for Street Lighting Network - (RD-C-3/2)-Z7-C032-SL | 2d | 2026-11-12 | 2026-11-14 | RHD4PRSHLDOSSL1100, RHD4ENMSSL2000, RHD4ENMSSL2010, RHD4PRSHLSTAGSL1100, RHD4CZ7C032SL3100 |
| RHD4CZ7C032SL3300 |  | Warning tape and Backfill for Street Lighting Cables for Street Lighting Network - (RD-C-3/2)-Z7-C032-SL | 2d | 2026-11-15 | 2026-11-16 | RHD4CZ7C032SL3200 |
| RHD4CZ7C032SL3400 |  | Testing of Street Lighting Cables for Street Lighting Network - (RD-C-3/2)-Z7-C032-SL | 2d | 2026-11-17 | 2026-11-18 | RHD4CZ7C032SL3300 |
|  | 6346 | **RHD4-02-002-C032-(SL)-Street Lighting Poles** |  | 2026-11-19 | 2026-12-03 |  |
| RHD4CZ7C032SL1100 |  | Excavation for RC Base for Lighting Poles for Street Lighting Network - (RD-C-3/2)-Z7-C032-SL | 2d | 2026-11-19 | 2026-11-21 | RHD4ENSDZ7APPSL170, RHD4CZ7C032SL3400, RHD4CZ9C071ST6100, RHD4CZ1L101ST7500 |
| RHD4CZ7C032SL1200 |  | Installation for RC Base for Lighting Poles for Street Lighting Network - (RD-C-3/2)-Z7-C032-SL | 2d | 2026-11-22 | 2026-11-23 | RHD4CZ7C032SL1100 |

| ID | WBS | Task | Duration | Start | Finish | Predecessors |
| --- | --- | --- | --- | --- | --- | --- |
| RHD4CZ7C032SL1300 |  | Backfill for RC Base for Lighting Poles for Street Lighting Network - (RD-C-3/2)-Z7-C032-SL | 2d | 2026-11-24 | 2026-11-25 | RHD4CZ7C032SL1200 |
| RHD4CZ7C032SL1400 |  | Installation for Lighting Poles for Street Lighting Network - (RD-C-3/2)-Z7-C032-SL | 2d | 2026-11-26 | 2026-11-28 | RHD4PRSHLDOSSL1200, RHD4ENMSSL2000, RHD4ENMSSL2010, RHD4PRSHLSTAGSL1200, RHD4CZ7C032SL1300 |
| RHD4CZ7C032SL1500 |  | Luminaire Installation for Lighting Poles for Street Lighting Network - (RD-C-3/2)-Z7-C032-SL | 3d | 2026-12-01 | 2026-12-03 | RHD4PRSHLDOSSL1300, RHD4PRSHLSTAGSL1300, RHD4CZ7C032SL1400, RHD4CZ7C032SL6100 |
|  | 6348 | **RHD4-02-002-C032-(SL)-Street Lighting Earthing System** |  | 2026-11-29 | 2026-11-30 |  |
| RHD4CZ7C032SL6100 |  | Installation of Earthing for Lighting Poles and Fedder Pillers for Street Lighting Network - (RD-C-3/2)-Z7-C032-SL | 2d | 2026-11-29 | 2026-11-30 | RHD4ENMSER2000, RHD4ENMSER2010, RHD4CZ7C032SL1400 |
|  | 6354 | **RHD4-02-002-Z7-C032-Telecommunications Network - TC** |  | 2026-08-17 | 2026-12-27 |  |
|  | 6355 | **RHD4-02-002-C032-(TC)-Telecommunications Ducts** |  | 2026-12-05 | 2026-12-27 |  |
| RHD4CZ7C032TC2100 |  | Excavation of HDPE Ducts for Telecom Network - (RD-C-3/2)-Z7-C032-TC | 6d | 2026-12-05 | 2026-12-10 | RHD4ENSDZ7APPTC190, RHD4CZ7C032SL1500 |
| RHD4CZ7C032TC2200 |  | Installation of HDPE Ducts for Telecom Network - (RD-C-3/2)-Z7-C032-TC | 8d | 2026-12-12 | 2026-12-20 | RHD4PRSHLDOSTC1000, RHD4PRSHLSTAGTC1000, RHD4CZ7C032TC2100 |
| RHD4CZ7C032TC2400 |  | Backfilling of HDPE Ducts for Telecom Network - (RD-C-3/2)-Z7-C032-TC | 6d | 2026-12-21 | 2026-12-27 | RHD4CZ7C032TC2200, RHD4CZ7C032TC5200 |
|  | 6356 | **RHD4-02-002-C032-(TC)-Telecommunications Manholes** |  | 2026-12-12 | 2026-12-17 |  |
| RHD4CZ7C032TC5100 |  | Excavation for Manholes for Telecom Network - (RD-C-3/2)-Z7-C032-TC | 3d | 2026-12-12 | 2026-12-14 | RHD4ENSDZ7APPTC190, RHD4CZ7C032TC2100 |
| RHD4CZ7C032TC5200 |  | Installation of Manholes for Telecom Network - (RD-C-3/2)-Z7-C032-TC | 3d | 2026-12-15 | 2026-12-17 | RHD4PRSHLDOSTC1200, RHD4PRSHLSTAGTC1200, RHD4CZ7C032TC5100, RHD4CZ7C032TC2200 SS |
|  | 6357 | **RHD4-02-002-C032-(TC)-Telecomminications Road Crossings** |  | 2026-08-17 | 2026-08-29 |  |
| RHD4CZ7C032TC3100 |  | Excavation for Road Crossings for Telecom Network - (RD-C-3/2)-Z7-C032-TC | 3d | 2026-08-17 | 2026-08-19 | RHD4ENSDZ7APPTC190, RHD4PRSHLDOSICT1000 |
| RHD4CZ7C032TC3200 |  | Installation of Road Crossings for Telecom Network - (RD-C-3/2)-Z7-C032-TC | 3d | 2026-08-20 | 2026-08-23 | RHD4PRSHLDOSTC1100, RHD4PRSHLSTAGTC1100, RHD4CZ7C032TC3100, RHD4CZ5L08ST3500, RHD4CZ5L016ST1500 |
| RHD4CZ7C032TC3300 |  | Pouring of Road Crossings for Telecom Network - (RD-C-3/2)-Z7-C032-TC | 3d | 2026-08-24 | 2026-08-26 | RHD4CZ7C032TC3200 |
| RHD4CZ7C032TC3400 |  | Backfilling of Road Crossings for Telecom Network - (RD-C-3/2)-Z7-C032-TC | 2d | 2026-08-27 | 2026-08-29 | RHD4CZ7C032TC3300 |
|  | 6358 | **RHD4-02-002-Z7-C032-Information and Communication Technologies - ICT** |  | 2026-08-17 | 2027-01-25 |  |
|  | 6359 | **RHD4-02-002-C032-(ICT)-Information and Communication Technologies Ducts** |  | 2026-12-28 | 2027-01-25 |  |
| RHD4CZ7C032ICT2100 |  | Excavation of HDPE Ducts for ICT Network - (RD-C-3/2)-Z7-C032-ICT | 6d | 2026-12-28 | 2027-01-03 | RHD4ENSDZ7APPICT200, RHD4CZ7C032TC2400, RHD4CZ7C032MV2400 |
| RHD4CZ7C032ICT2200 |  | Installation of HDPE Ducts for ICT Network - (RD-C-3/2)-Z7-C032-ICT | 9d | 2027-01-04 | 2027-01-13 | RHD4PRSHLDOSICT1000, RHD4PRSHLSTAGICT1000, RHD4CZ7C032ICT2100 |
| RHD4CZ7C032ICT2400 |  | Backfilling of HDPE Ducts for ICT Network - (RD-C-3/2)-Z7-C032-ICT | 6d | 2027-01-19 | 2027-01-25 | RHD4CZ7C032ICT5200 |
|  | 6360 | **RHD4-02-002-C032-(ICT)-Information and Communication Technologies Manholes** |  | 2027-01-14 | 2027-01-18 |  |
| RHD4CZ7C032ICT5100 |  | Excavation for Manholes for ICT Network - (RD-C-3/2)-Z7-C032-ICT | 2d | 2027-01-14 | 2027-01-16 | RHD4ENSDZ7APPICT200, RHD4CZ7C032ICT2200 |
| RHD4CZ7C032ICT5200 |  | Installation of Manholes for ICT Network - (RD-C-3/2)-Z7-C032-ICT | 2d | 2027-01-17 | 2027-01-18 | RHD4PRSHLDOSICT1200, RHD4PRSHLSTAGICT1200, RHD4CZ7C032ICT5100 |
|  | 6361 | **RHD4-02-002-C032-(ICT)-Information and Communication Technologies Road Crossings** |  | 2026-08-17 | 2026-08-25 |  |
| RHD4CZ7C032ICT3100 |  | Excavation for Road Crossings for ICT Network - (RD-C-3/2)-Z7-C032-ICT | 2d | 2026-08-17 | 2026-08-18 | RHD4ENSDZ7APPICT200, RHD4PRSHLDOSICT1000 |
| RHD4CZ7C032ICT3200 |  | Installation of Road Crossings for ICT Network - (RD-C-3/2)-Z7-C032-ICT | 2d | 2026-08-19 | 2026-08-20 | RHD4PRSHLDOSICT1100, RHD4PRSHLSTAGICT1100, RHD4CZ7C032ICT3100 |
| RHD4CZ7C032ICT3300 |  | Pouring of Road Crossings for ICT Network - (RD-C-3/2)-Z7-C032-ICT | 2d | 2026-08-22 | 2026-08-23 | RHD4CZ7C032ICT3200 |
| RHD4CZ7C032ICT3400 |  | Backfilling of Road Crossings for ICT Network - (RD-C-3/2)-Z7-C032-ICT | 2d | 2026-08-24 | 2026-08-25 | RHD4CZ7C032ICT3300 |
|  | 6349 | **RHD4-02-002-Z7-C032-Landscape Network - LS** |  |  |  |  |
|  | 6350 | **RHD4-02-002-C032-(LS)-Landscape Lighting cables** |  |  |  |  |
|  | 6351 | **RHD4-02-002-C032-(LS)-Landscape Feeder Pillars** |  |  |  |  |
|  | 6352 | **RHD4-02-002-C032-(LS)-Landscape Bollard Poles** |  |  |  |  |
|  | 6353 | **RHD4-02-002-C032-(LS)-Landscape Feeder Pillars Earthing** |  |  |  |  |
|  | 6362 | **RHD4-02-002-Z7-C032-Security Network - CCTV** |  | 2027-01-26 | 2027-03-01 |  |
|  | 6363 | **RHD4-02-002-C032-(CCTV)-Civil Works** |  | 2027-01-26 | 2027-01-31 |  |
| RHD4CZ7C032CCTV2100 |  | Civil Works for Security Network - (RD-C-3/2)-Z7-C032-CCTV | 5d | 2027-01-26 | 2027-01-31 | RHD4CZ7C032ICT2400 |
|  | 6364 | **RHD4-02-002-C032-(CCTV)-CCTV Poles** |  | 2027-02-01 | 2027-02-11 |  |
| RHD4CZ7C032CCTV1100 |  | Excavation for RC Base for CCTV Poles for Security Network - (RD-C-3/2)-Z7-C032-CCTV | 2d | 2027-02-01 | 2027-02-02 | RHD4ENSDZ7APPCCTV210, RHD4CZ7C032CCTV2100 |
| RHD4CZ7C032CCTV1200 |  | Installation for RC Base for CCTV Poles for Security Network - (RD-C-3/2)-Z7-C032-CCTV | 2d | 2027-02-03 | 2027-02-04 | RHD4CZ7C032CCTV1100 |
| RHD4CZ7C032CCTV1300 |  | Backfill for RC Base for CCTV Poles for Security Network - (RD-C-3/2)-Z7-C032-CCTV | 2d | 2027-02-06 | 2027-02-07 | RHD4CZ7C032CCTV1200 |
| RHD4CZ7C032CCTV1400 |  | Installation for CCTV Poles for Security Network - (RD-C-3/2)-Z7-C032-CCTV | 2d | 2027-02-08 | 2027-02-09 | RHD4PRSHLDOSCCTV1000, RHD4PRSHLSTACCTV1000, RHD4CZ7C032CCTV1300 |
| RHD4CZ7C032CCTV1500 |  | Protection post Installation for CCTV Poles for Security Network - (RD-C-3/2)-Z7-C032-CCTV | 2d | 2027-02-10 | 2027-02-11 | RHD4CZ7C032CCTV1400 |
|  | 6365 | **RHD4-02-002-C032-(CCTV)-Camera** |  | 2027-02-13 | 2027-02-14 |  |
| RHD4CZ7C032CCTV3100 |  | Installation for Cameras for Security Network - (RD-C-3/2)-Z7-C032-CCTV | 2d | 2027-02-13 | 2027-02-14 | RHD4PRSHLDOSCCTV1100, RHD4PRSHLSTACCTV1100, RHD4CZ7C032CCTV1500 |
|  | 6366 | **RHD4-02-002-C032-(CCTV)-Power and Infrastructure** |  | 2027-02-25 | 2027-03-01 |  |
| RHD4CZ7C032CCTV4100 |  | Installation of Power outlet, UPS and midspan for PTZ Camerafor Cameras for Security Network - (RD-C-3/2)-Z7-C032-CCTV | 2d | 2027-02-25 | 2027-02-27 | RHD4PRSHLDOSCCTV1300, RHD4PRSHLSTACCTV1300, RHD4CZ7C032CCTV1400, RHD4CZ7C032CCTV6100 |
| RHD4CZ7C032CCTV4200 |  | Short Range Wireless PoP wireless Bridgefor CCTV Poles for Security Network - (RD-C-3/2)-Z7-C032-CCTV | 2d | 2027-02-28 | 2027-03-01 | RHD4CZ7C032CCTV4100 |
|  | 6368 | **RHD4-02-002-C032-(CCTV)-CCTV Panels and Components** |  | 2027-02-15 | 2027-02-24 |  |
| RHD4CZ7C032CCTV6100 |  | Installation for CCTV Panels for Security Network - (RD-C-3/2)-Z7-C032-CCTV | 8d | 2027-02-15 | 2027-02-24 | RHD4PRSHLDOSCCTV1200, RHD4PRSHLSTACCTV1200, RHD4PRLOLSTACCTV1001, RHD4CZ7C032CCTV3100 |
|  | 6379 | **RHD4-02-002-Z7-L03** |  | 2026-08-13 | 2027-07-07 |  |
|  | 6410 | **RHD4-02-002-Z7-L03-Crossings Sewage Network - SWCr** |  |  |  |  |
|  | 6420 | **RHD4-02-002-L03-(SWCr)-MH Works - 1200 mm diameter** |  |  |  |  |
|  | 6422 | **RHD4-02-002-L03-(SWCr)-MH Works - 1500 mm diameter** |  |  |  |  |
|  | 6423 | **RHD4-02-002-L03-(SWCr)-MH Works - 1500 mm diameter with Back drop** |  |  |  |  |
|  | 6415 | **RHD4-02-002-L03-(SWCr)-GRP Pipes - 700 mm diameter** |  |  |  |  |
|  | 6414 | **RHD4-02-002-L03-(SWCr)-GRP Pipes - 600 mm diameter** |  |  |  |  |
|  | 6412 | **RHD4-02-002-L03-(SWCr)-GRP Pipes - 400 mm diameter** |  |  |  |  |
|  | 6411 | **RHD4-02-002-L03-(SWCr)-GRP Pipes - 300 mm diameter** |  |  |  |  |
|  | 6417 | **RHD4-02-002-L03-(SWCr)-HDPE Pipes - 250 mm diameter** |  |  |  |  |
|  | 6416 | **RHD4-02-002-L03-(SWCr)-UPVC Pipes - 200 mm diameter** |  |  |  |  |
|  | 6424 | **RHD4-02-002-L03-(SWCr)-Wash out Chambers** |  |  |  |  |
|  | 6425 | **RHD4-02-002-L03-(SWCr)-Wash out Valves** |  |  |  |  |
|  | 6454 | **RHD4-02-002-Z7-L03-Crossings Potable Network - PTCr** |  |  |  |  |
|  | 6455 | **RHD4-02-002-L03-(PTCr)-HDPE Pipes - 110 mm diameter** |  |  |  |  |
|  | 6456 | **RHD4-02-002-L03-(PTCr)-HDPE Pipes - 160 mm diameter** |  |  |  |  |
|  | 6460 | **RHD4-02-002-L03-(PTCr)-Gate Valves (Direct Buried)** |  |  |  |  |
|  | 6465 | **RHD4-02-002-L03-(PTCr)-Air Valve Chambers** |  |  |  |  |

| ID | WBS | Task | Duration | Start | Finish | Predecessors |
| --- | --- | --- | --- | --- | --- | --- |
|  | 6466 | **RHD4-02-002-L03-(PTCr)-Air Valves** |  |  |  |  |
|  | 6467 | **RHD4-02-002-L03-(PTCr)-Fire Hydrant** |  |  |  |  |
|  | 6501 | **RHD4-02-002-Z7-L03-Crossings Irrigation Network - IRRC** |  |  |  |  |
|  | 6502 | **RHD4-02-002-L03-(IRRC)-HDPE Pipes - 160 mm diameter** |  |  |  |  |
|  | 6506 | **RHD4-02-002-L03-(IRRC)-HDPE Pipes - 315 mm diameter** |  |  |  |  |
|  | 6510 | **RHD4-02-002-L03-(IRRC)-Gate Valves (Direct Buried)** |  |  |  |  |
|  | 6511 | **RHD4-02-002-L03-(IRRC)-Butterfly Valve Chamber** |  |  |  |  |
|  | 6512 | **RHD4-02-002-L03-(IRRC)-Butterfly Valves** |  |  |  |  |
|  | 6513 | **RHD4-02-002-L03-(IRRC)-Wash out Chamber** |  |  |  |  |
|  | 6514 | **RHD4-02-002-L03-(IRRC)-Wash out Valves** |  |  |  |  |
|  | 6515 | **RHD4-02-002-L03-(IRRC)-Air Valve Chamber** |  |  |  |  |
|  | 6516 | **RHD4-02-002-L03-(IRRC)-Air Valves** |  |  |  |  |
|  | 6558 | **RHD4-02-002-Z7-L03-Road Works - RD** |  | 2026-08-27 | 2027-07-07 |  |
|  | 6559 | **RHD4-02-002-L03-(RD)-Subgrade** |  | 2026-08-27 | 2026-09-02 |  |
| RHD4CZ7L03RD1100 |  | Supply, lay and compaction subgrade compacted thickness 300 mm for Roads - (RD-L-3)-Z7-L03-RD(Completed) | 6d | 2026-08-27 | 2026-09-02 | RHD4ENSDZ7APPEW100, RHD4ENSDZ7APPRD220, RHD4CZ7L03RW3000, RHD4CZ7L03ST1508, RHD4CZ7L03TC3400, RHD4CZ7L03ICT3400 |
|  | 6560 | **RHD4-02-002-L03-(RD)-Aggregate Base Course** |  | 2026-09-03 | 2026-09-09 |  |
| RHD4CZ7L03RD2100 |  | Supply, lay and compaction Aggregate base course compacted thickness 300 mmfor Roads - (RD-L-3)-Z7-L03-RD | 6d | 2026-09-03 | 2026-09-09 | RHD4PRSHLDOSRD1000, RHD4PRSHLSTAGRD1000, RHD4CZ7L03RD1100 |
|  | 6561 | **RHD4-02-002-L03-(RD)-Bituminous base course Two Layers, including (MC1)&(RC2)** |  | 2026-09-10 | 2027-05-30 |  |
| RHD4CZ7L03RD3100 |  | Supply, lay and Asphaltic base course including Prime Coat (MC1) for 1st Layer - (RD-L-3)-Z7-L03-RD | 2d | 2026-09-10 | 2026-09-12 | RHD4PRSHLDOSRD1100, RHD4ENMSASPH2000, RHD4ENMSASPH2010, RHD4PRSHLSTAGRD1100, RHD4CZ7L03RD2100 |
| RHD4CZ7L03RD3200 |  | Supply, lay and Asphaltic base course including Tack Coat (RC2) for 2nd Layer - (RD-L-3)-Z7-L03-RD | 2d | 2027-05-29 | 2027-05-30 | RHD4PRSHLDOSRD1100, RHD4PRSHLSTAGRD1100, RHD4CZ7L03CCTV6100 |
|  | 6563 | **RHD4-02-002-L03-(RD)-Precast Concrete Curb** |  | 2027-05-31 | 2027-06-09 |  |
| RHD4CZ7L03RD5100 |  | Supply and installation Precast Concrete Kerb for Roads - (RD-L-3)-Z7-L03-RD | 9d | 2027-05-31 | 2027-06-09 | RHD4PRSHLDOSRD1200, RHD4ENMSRD2000, RHD4ENMSRD2010, RHD4PRSHLSTAGRD1200, RHD4CZ7L03RD3200, RHD4CZ7C032RD5100 |
|  | 6566 | **RHD4-02-002-L03-(RD)-Traffic Signage** |  | 2027-06-10 | 2027-06-17 |  |
| RHD4CZ7L03RD8100 |  | Installation of Traffic Signage for Road Network - (RD-L-3)-Z7-L03-RD | 7d | 2027-06-10 | 2027-06-17 | RHD4PRSHLDOSRD1600, RHD4PRSHLSTAGRD1600, RHD4CZ7L03RD5100, RHD4CZ7L03TC2400, RHD4CZ7L03ICT2400, RHD4CZ7C032RD8100 |
|  | 6564 | **RHD4-02-002-L03-(RD)-Precast Interlocking Block Pavers** |  | 2027-06-19 | 2027-06-29 |  |
| RHD4CZ7L03RD6100 |  | Interlocking block pavers for sidewalk-footpath for Side walks and Parking areas - (RD-L-3)-Z7-L03-RD | 10d | 2027-06-19 | 2027-06-29 | RHD4PRSHLDOSRD1300, RHD4PRSHLDOSRD1400, RHD4ENMSRD2000, RHD4ENMSRD2010, RHD4PRSHLSTAGRD1300, RHD4PRSHLSTAGRD1400, RHD4CZ7L03RD8100 |
|  | 6562 | **RHD4-02-002-L03-(RD)-Bituminous concrete wearing course including tack coat (RC2)** |  | 2027-06-30 | 2027-07-01 |  |
| RHD4CZ7L03RD4100 |  | Supply, lay and compaction Asphaltic wearing course including tack Coat (RC2)for Road Network - (RD-L-3)-Z7-L03-RD | 2d | 2027-06-30 | 2027-07-01 | RHD4CZ7L03RD5100, RHD4CZ7L03RD6100, RHD4CZ7C032RD4100 |
|  | 6565 | **RHD4-02-002-L03-(RD)-Pavement Marking** |  | 2027-07-03 | 2027-07-07 |  |
| RHD4CZ7L03RD7100 |  | Pavement Markings for Road Network - (RD-L-3)-Z7-L03-RD | 5d | 2027-07-03 | 2027-07-07 | RHD4PRSHLDOSRD1500, RHD4PRSHLSTAGRD1500, RHD4CZ7L03RD4100, RHD4CZ7C032RD7100 |
|  | 6383 | **RHD4-02-002-Z7-L03-Storm Network - ST** |  | 2026-08-13 | 2027-01-28 |  |
|  | 6402 | **RHD4-02-002-L03-(ST)-MH Works - 2000 mm diameter** |  | 2026-12-29 | 2027-01-09 |  |
| RHD4CZ7L03ST3102 |  | Excavation and PC Blinding works for MH 2000 mm - (RD-L-3)-Z7-L03-ST | 2d | 2026-12-29 | 2026-12-30 | RHD4ENSDZ7APPST110, RHD4ENMSST2000, RHD4CZ7L03ST2100 |
| RHD4CZ7L03ST3202 |  | Installation of Base for MH 2000 mm - (RD-L-3)-Z7-L03-ST | 2d | 2026-12-31 | 2027-01-02 | RHD4PRSHLSTAGST1606, RHD4CZ7L03ST3102 |
| RHD4CZ7L03ST3302 |  | MH Ring and C.Slab works and Backfilling works for MH 2000 mm - (RD-L-3)-Z7-L03-ST | 2d | 2027-01-03 | 2027-01-04 | RHD4PRSHLDOSST1606, RHD4CZ7L03ST3202 |
| RHD4CZ7L03ST3402 |  | Steel Cover for MH 2000 mm - (RD-L-3)-Z7-L03-ST | 2d | 2027-01-05 | 2027-01-06 | RHD4PRSHLDOSST1706, RHD4PRSHLSTAGST1706, RHD4CZ7L03ST3302 |
| RHD4CZ7L03ST3502 |  | Finishing, Benching, Testing works for MH 2000 mm - (RD-L-3)-Z7-L03-ST | 2d | 2027-01-07 | 2027-01-09 | RHD4CZ7L03ST3402 |
|  | 3743 | **RHD4-02-002-L03-(ST)-GRP Pipes - 1100 mm diameter** |  | 2026-12-13 | 2026-12-23 |  |
| RHD4CZ7L03ST1107 |  | Excavation works for GRP Pipe Line 1100 mm - (RD-L-3)-Z7-L03-ST | 2d | 2026-12-13 | 2026-12-14 | RHD4ENMSEW2000, RHD4ENMSEW2010, RHD4ENSDZ7APPEW100 SS, RHD4CZ4A013ST6100, RHD4CZ7L03MV2400, RHD4CZ7L03SL2400 |
| RHD4CZ7L03ST1207 |  | Bedding works for GRP Pipe Line 1100 mm - (RD-L-3)-Z7-L03-ST | 2d | 2026-12-15 | 2026-12-16 | RHD4CZ7L03ST1107 |
| RHD4CZ7L03ST1307 |  | Installing for GRP Pipe Line 1100 mm - (RD-L-3)-Z7-L03-ST | 2d | 2026-12-17 | 2026-12-19 | RHD4CZ7L03ST1207 |
| RHD4CZ7L03ST1407 |  | Primary Test for GRP Pipe Line 1100 mm - (RD-L-3)-Z7-L03-ST | 2d | 2026-12-20 | 2026-12-21 | RHD4CZ7L03ST1307 |
| RHD4CZ7L03ST1507 |  | Backfilling and warning tape works for GRP Pipe Line 1100 mm - (RD-L-3)-Z7-L03-ST | 2d | 2026-12-22 | 2026-12-23 | RHD4CZ7L03ST1407 |
|  | 5254 | **RHD4-02-002-L03-(ST)-GRP Pipes - 900 mm diameter** |  | 2026-12-15 | 2026-12-26 |  |
| RHD4CZ7L03ST1105 |  | Excavation works for GRP Pipe Line 900 mm - (RD-L-3)-Z7-L03-ST | 2d | 2026-12-15 | 2026-12-16 | RHD4CZ7L03ST1107 |
| RHD4CZ7L03ST1205 |  | Bedding works for GRP Pipe Line 900 mm - (RD-L-3)-Z7-L03-ST | 2d | 2026-12-17 | 2026-12-19 | RHD4CZ7L03ST1105 |
| RHD4CZ7L03ST1305 |  | Installing for GRP Pipe Line 900 mm - (RD-L-3)-Z7-L03-ST | 2d | 2026-12-20 | 2026-12-21 | RHD4CZ7L03ST1205 |
| RHD4CZ7L03ST1405 |  | Primary Test for GRP Pipe Line 900 mm - (RD-L-3)-Z7-L03-ST | 2d | 2026-12-22 | 2026-12-23 | RHD4CZ7L03ST1305 |
| RHD4CZ7L03ST1505 |  | Backfilling and warning tape works for GRP Pipe Line 900 mm - (RD-L-3)-Z7-L03-ST | 2d | 2026-12-24 | 2026-12-26 | RHD4CZ7L03ST1405, RHD4CZ7L03ST1507 |
|  | 6022 | **RHD4-02-002-L03-(ST)-MH Works - 1200 mm diameter** |  | 2027-01-06 | 2027-01-28 |  |
| RHD4CZ7L03ST3100 |  | Excavation and PC Blinding works for MH 1200 mm - (RD-L-3)-Z7-L03-ST | 2d | 2027-01-06 | 2027-01-07 | RHD4CZ7L03ST3101 |
| RHD4CZ7L03ST3200 |  | Installation of Base for MH 1200 mm - (RD-L-3)-Z7-L03-ST | 2d | 2027-01-09 | 2027-01-10 | RHD4CZ7L03ST3100 |
| RHD4CZ7L03ST3300 |  | MH Ring and C.Slab works and Backfilling works for MH 1200 mm - (RD-L-3)-Z7-L03-ST | 2d | 2027-01-11 | 2027-01-12 | RHD4CZ7L03ST3200 |
| RHD4CZ7L03ST3400 |  | Steel Cover for MH 1200 mm - (RD-L-3)-Z7-L03-ST | 2d | 2027-01-21 | 2027-01-23 | RHD4CZ7L03ST3300, RHD4CZ7L03ST1500, RHD4CZ7L03ST3401 |
| RHD4CZ7L03ST3500 |  | Finishing, Benching, Testing works for MH 1200 mm - (RD-L-3)-Z7-L03-ST | 2d | 2027-01-27 | 2027-01-28 | RHD4CZ7L03ST3400, RHD4CZ7L03ST3501, RHD4CZ7L03ST1502 |
|  | 6023 | **RHD4-02-002-L03-(ST)-MH Works - 1500 mm diameter** |  | 2026-12-31 | 2027-01-26 |  |
| RHD4CZ7L03ST3101 |  | Excavation and PC Blinding works for MH 1500 mm - (RD-L-3)-Z7-L03-ST | 5d | 2026-12-31 | 2027-01-05 | RHD4CZ7L03ST3102 |
| RHD4CZ7L03ST3201 |  | Installation of Base for MH 1500 mm - (RD-L-3)-Z7-L03-ST | 5d | 2027-01-06 | 2027-01-11 | RHD4CZ7L03ST3101 |
| RHD4CZ7L03ST3301 |  | MH Ring and C.Slab works and Backfilling works for MH 1500 mm - (RD-L-3)-Z7-L03-ST | 5d | 2027-01-12 | 2027-01-17 | RHD4CZ7L03ST3201 |
| RHD4CZ7L03ST3401 |  | Steel Cover for MH 1500 mm - (RD-L-3)-Z7-L03-ST | 3d | 2027-01-18 | 2027-01-20 | RHD4CZ7L03ST3301, RHD4CZ7L03ST1500 |
| RHD4CZ7L03ST3501 |  | Finishing, Benching, Testing works for MH 1500 mm - (RD-L-3)-Z7-L03-ST | 5d | 2027-01-21 | 2027-01-26 | RHD4CZ7L03ST3401 |
|  | 6014 | **RHD4-02-002-L03-(ST)-GRP Pipes - 1200 mm diameter** |  | 2026-08-13 | 2026-08-24 |  |
| RHD4CZ7L03ST1108 |  | Excavation works for GRP Pipe Line 1200 mm - (RD-L-3)-Z7-L03-ST | 2d | 2026-08-13 | 2026-08-15 | RHD4ENSDZ7APPEW100, RHD4ENSDZ7APPRD220, RHD4CZ4A013ST3100 |
| RHD4CZ7L03ST1208 |  | Bedding works for GRP Pipe Line 1200 mm - (RD-L-3)-Z7-L03-ST | 2d | 2026-08-16 | 2026-08-17 | RHD4CZ7L03ST1108 |
| RHD4CZ7L03ST1308 |  | Installing for GRP Pipe Line 1200 mm - (RD-L-3)-Z7-L03-ST | 2d | 2026-08-18 | 2026-08-19 | RHD4CZ7L03ST1208 |
| RHD4CZ7L03ST1408 |  | Primary Test for GRP Pipe Line 1200 mm - (RD-L-3)-Z7-L03-ST | 2d | 2026-08-20 | 2026-08-22 | RHD4CZ7L03ST1308 |
| RHD4CZ7L03ST1508 |  | Backfilling and warning tape works for GRP Pipe Line 1200 mm - (RD-L-3)-Z7-L03-ST | 2d | 2026-08-23 | 2026-08-24 | RHD4CZ7L03ST1408 |
|  | 6010 | **RHD4-02-002-L03-(ST)-GRP Pipes - 800 mm diameter** |  | 2026-12-17 | 2026-12-29 |  |
| RHD4CZ7L03ST1104 |  | Excavation works for GRP Pipe Line 800 mm - (RD-L-3)-Z7-L03-ST | 2d | 2026-12-17 | 2026-12-19 | RHD4CZ7L03ST1105 |
| RHD4CZ7L03ST1204 |  | Bedding works for GRP Pipe Line 800 mm - (RD-L-3)-Z7-L03-ST | 2d | 2026-12-20 | 2026-12-21 | RHD4CZ7L03ST1104 |

| ID | WBS | Task | Duration | Start | Finish | Predecessors |
| --- | --- | --- | --- | --- | --- | --- |
| RHD4CZ7L03ST1304 |  | Installing for GRP Pipe Line 800 mm - (RD-L-3)-Z7-L03-ST | 2d | 2026-12-22 | 2026-12-23 | RHD4CZ7L03ST1204, RHD4CZ7L03ST1308 |
| RHD4CZ7L03ST1404 |  | Primary Test for GRP Pipe Line 800 mm - (RD-L-3)-Z7-L03-ST | 2d | 2026-12-24 | 2026-12-26 | RHD4CZ7L03ST1304, RHD4CZ7L03ST1408 |
| RHD4CZ7L03ST1504 |  | Backfilling and warning tape works for GRP Pipe Line 800 mm - (RD-L-3)-Z7-L03-ST | 3d | 2026-12-27 | 2026-12-29 | RHD4CZ7L03ST1404, RHD4CZ7L03ST1508 |
|  | 6008 | **RHD4-02-002-L03-(ST)-GRP Pipes - 600 mm diameter** |  | 2026-12-22 | 2027-01-02 |  |
| RHD4CZ7L03ST1102 |  | Excavation works for GRP Pipe Line 600 mm - (RD-L-3)-Z7-L03-ST | 2d | 2026-12-22 | 2026-12-23 | RHD4CZ7L03ST1103 |
| RHD4CZ7L03ST1202 |  | Bedding works for GRP Pipe Line 600 mm - (RD-L-3)-Z7-L03-ST | 2d | 2026-12-24 | 2026-12-26 | RHD4CZ7L03ST1102 |
| RHD4CZ7L03ST1302 |  | Installing for GRP Pipe Line 600 mm - (RD-L-3)-Z7-L03-ST | 2d | 2026-12-27 | 2026-12-28 | RHD4CZ7L03ST1202, RHD4CZ7L03ST1304 |
| RHD4CZ7L03ST1402 |  | Primary Test for GRP Pipe Line 600 mm - (RD-L-3)-Z7-L03-ST | 2d | 2026-12-29 | 2026-12-30 | RHD4CZ7L03ST1302, RHD4CZ7L03ST1404 |
| RHD4CZ7L03ST1502 |  | Backfilling and warning tape works for GRP Pipe Line 600 mm - (RD-L-3)-Z7-L03-ST | 2d | 2026-12-31 | 2027-01-02 | RHD4CZ7L03ST1402, RHD4CZ7L03ST1504, RHD4CZ7L03ST1503 |
|  | 6006 | **RHD4-02-002-L03-(ST)-GRP Pipes - 400 mm diameter** |  | 2026-12-24 | 2027-01-04 |  |
| RHD4CZ7L03ST1100 |  | Excavation works for GRP Pipe Line 400 mm - (RD-L-3)-Z7-L03-ST | 2d | 2026-12-24 | 2026-12-26 | RHD4CZ7L03ST1102 |
| RHD4CZ7L03ST1200 |  | Bedding works for GRP Pipe Line 400 mm - (RD-L-3)-Z7-L03-ST | 2d | 2026-12-27 | 2026-12-28 | RHD4CZ7L03ST1100 |
| RHD4CZ7L03ST1300 |  | Installing for GRP Pipe Line 400 mm - (RD-L-3)-Z7-L03-ST | 2d | 2026-12-29 | 2026-12-30 | RHD4CZ7L03ST1200 |
| RHD4CZ7L03ST1400 |  | Primary Test for GRP Pipe Line 400 mm - (RD-L-3)-Z7-L03-ST | 2d | 2026-12-31 | 2027-01-02 | RHD4CZ7L03ST1300 |
| RHD4CZ7L03ST1500 |  | Backfilling and warning tape works for GRP Pipe Line 400 mm - (RD-L-3)-Z7-L03-ST | 2d | 2027-01-03 | 2027-01-04 | RHD4CZ7L03ST1400 |
|  | 3739 | **RHD4-02-002-L03-(ST)-GRP Pipes - 700 mm diameter** |  | 2026-12-20 | 2026-12-30 |  |
| RHD4CZ7L03ST1103 |  | Excavation works for GRP Pipe Line 700 mm - (RD-L-3)-Z7-L03-ST | 2d | 2026-12-20 | 2026-12-21 | RHD4CZ7L03ST1104 |
| RHD4CZ7L03ST1203 |  | Bedding works for GRP Pipe Line 700 mm - (RD-L-3)-Z7-L03-ST | 2d | 2026-12-22 | 2026-12-23 | RHD4CZ7L03ST1103 |
| RHD4CZ7L03ST1303 |  | Installing for GRP Pipe Line 700 mm - (RD-L-3)-Z7-L03-ST | 2d | 2026-12-24 | 2026-12-26 | RHD4CZ7L03ST1203 |
| RHD4CZ7L03ST1403 |  | Primary Test for GRP Pipe Line 700 mm - (RD-L-3)-Z7-L03-ST | 2d | 2026-12-27 | 2026-12-28 | RHD4CZ7L03ST1303 |
| RHD4CZ7L03ST1503 |  | Backfilling and warning tape works for GRP Pipe Line 700 mm - (RD-L-3)-Z7-L03-ST | 2d | 2026-12-29 | 2026-12-30 | RHD4CZ7L03ST1403, RHD4CZ7L03ST1505 |
|  | 6396 | **RHD4-02-002-L03-(ST)-GRP Pipes - 1600 mm diameter** |  |  |  |  |
|  | 6395 | **RHD4-02-002-L03-(ST)-GRP Pipes - 1500 mm diameter** |  |  |  |  |
|  | 6394 | **RHD4-02-002-L03-(ST)-GRP Pipes - 1400 mm diameter** |  |  |  |  |
|  | 6393 | **RHD4-02-002-L03-(ST)-GRP Pipes - 1300 mm diameter** |  |  |  |  |
|  | 6399 | **RHD4-02-002-L03-(ST)-UPVC Pipes - 400 mm diameter** |  |  |  |  |
|  | 6398 | **RHD4-02-002-L03-(ST)-UPVC Pipes - 300 mm diameter** |  | 2026-12-27 | 2027-01-07 |  |
| RHD4CZ7L03ST2100 |  | Excavation works for UPVC Pipe Line 300 mm - (RD-L-3)-Z7-L03-ST | 2d | 2026-12-27 | 2026-12-28 | RHD4ENSDZ7APPST110, RHD4CZ7L03ST1100 |
| RHD4CZ7L03ST2200 |  | Bedding works for UPVC Pipe Line 300 mm - (RD-L-3)-Z7-L03-ST | 2d | 2026-12-29 | 2026-12-30 | RHD4CZ7L03ST2100 |
| RHD4CZ7L03ST2300 |  | Installing for UPVC Pipe Line 300 mm - (RD-L-3)-Z7-L03-ST | 2d | 2026-12-31 | 2027-01-02 | RHD4PRSHLDOSST1106, RHD4PRSHLSTAGST1106, RHD4CZ7L03ST2200 |
| RHD4CZ7L03ST2400 |  | Primary Test for UPVC Pipe Line 300 mm - (RD-L-3)-Z7-L03-ST | 2d | 2027-01-03 | 2027-01-04 | RHD4CZ7L03ST2300 |
| RHD4CZ7L03ST2500 |  | Backfilling and warning tape works for UPVC Pipe Line 300 mm - (RD-L-3)-Z7-L03-ST | 3d | 2027-01-05 | 2027-01-07 | RHD4CZ7L03ST2400, RHD4CZ7L03ST6100 |
|  | 6406 | **RHD4-02-002-L03-(ST)-Concrete Encasement** |  | 2026-12-31 | 2027-01-02 |  |
| RHD4CZ7L03ST6100 |  | Pipe Encasement for Storm Pipelines - (RD-L-3)-Z7-L03-ST | 2d | 2026-12-31 | 2027-01-02 | RHD4CZ7L03ST2300 SS, RHD4CZ7L03ST2300 FF, RHD4CZ7L03ST2200 |
|  | 6407 | **RHD4-02-002-Z7-L03-Catch Basin - ST** |  | 2026-12-31 | 2027-01-20 |  |
|  | 6408 | **RHD4-02-002-L03-(ST)-Single Catch Basin Works** |  | 2026-12-31 | 2027-01-20 |  |
| RHD4CZ7L03ST7100 |  | Excavation works for Single Catch Basin - (RD-L-3)-Z7-L03-ST | 3d | 2026-12-31 | 2027-01-03 | RHD4ENSDZ7APPST110, RHD4CZ7L03ST3102 |
| RHD4CZ7L03ST7200 |  | PC Blinding, Installation and Pipe connection for Single Catch Basin - (RD-L-3)-Z7-L03-ST | 3d | 2027-01-04 | 2027-01-06 | RHD4CZ7L03ST7100 |
| RHD4CZ7L03ST7300 |  | Rings & C.Slab & Final Backfill for Single Catch Basin - (RD-L-3)-Z7-L03-ST | 4d | 2027-01-07 | 2027-01-11 | RHD4PRSHLDOSST1306, RHD4PRSHLSTAGST1306, RHD4CZ7L03ST7200 |
| RHD4CZ7L03ST7400 |  | Steel Cover for Single Catch Basin - (RD-L-3)-Z7-L03-ST | 3d | 2027-01-12 | 2027-01-14 | RHD4PRSHLDOSST1706, RHD4CZ7L03ST7300 |
| RHD4CZ7L03ST7500 |  | Finishing and Insulation works for Single Catch Basin - (RD-L-3)-Z7-L03-ST | 5d | 2027-01-16 | 2027-01-20 | RHD4CZ7L03ST7400 |
|  | 6409 | **RHD4-02-002-L03-(ST)-Double Catch Basin Works** |  |  |  |  |
|  | 6432 | **RHD4-02-002-Z7-L03-Sewage Network - SW** |  | 2027-01-09 | 2027-04-11 |  |
|  | 1 | **Wash out Chamber for HDPE force Main** |  | 2027-01-31 | 2027-02-07 |  |
| RHD4CZ7L03SW4100 |  | Excavation and Bedding for Wash out Chamber for HDPE force Main - (RD-L-3)-Z7-L03-SW | 2d | 2027-01-31 | 2027-02-01 | RHD4CZ7L03SW2500 |
| RHD4CZ7L03SW4200 |  | PC works for Wash out Chamber for HDPE force Main - (RD-L-3)-Z7-L03-SW | 2d | 2027-02-02 | 2027-02-03 | RHD4CZ7L03SW4100 |
| RHD4CZ7L03SW4300 |  | Installation for Wash out Chamber for HDPE force Main - (RD-L-3)-Z7-L03-SW | 2d | 2027-02-04 | 2027-02-05 | RHD4CZ7L03SW4200 |
| RHD4CZ7L03SW4400 |  | Backfilling works for Wash out Chamber for HDPE force Main - (RD-L-3)-Z7-L03-SW | 2d | 2027-02-06 | 2027-02-07 | RHD4CZ7L03SW4300 |
|  | 2 | **Wash out Valves** |  | 2027-01-31 | 2027-02-09 |  |
| RHD4CZ7L03SW5100 |  | Installation for Wash out Valves for HDPE force Main - (RD-L-3)-Z7-L03-SW | 2d | 2027-01-31 | 2027-02-01 | RHD4CZ7L03SW2800 |
| RHD4CZ7L03SW5200 |  | Stem and Service box for Wash out Valves for HDPE force Main - (RD-L-3)-Z7-L03-SW | 2d | 2027-02-08 | 2027-02-09 | RHD4CZ7L03SW5100, RHD4CZ7L03SW4400 |
|  | 3 | **Air Valves** |  | 2027-01-31 | 2027-02-09 |  |
| RHD4CZ7L03SW5101 |  | Installation for Air Valves for HDPE force Main - (RD-L-3)-Z7-L03-SW | 2d | 2027-01-31 | 2027-02-01 | RHD4CZ7L03SW2800 |
| RHD4CZ7L03SW5201 |  | Stem and Service box for Air Valves for HDPE force Main - (RD-L-3)-Z7-L03-SW | 2d | 2027-02-08 | 2027-02-09 | RHD4CZ7L03SW5101, RHD4CZ7L03SW4400 |
|  | 4 | **Air Valve Chamber** |  | 2027-01-31 | 2027-02-07 |  |
| RHD4CZ7L03SW4101 |  | Excavation and Bedding for Air Valve Chamber for HDPE force Main - (RD-L-3)-Z7-L03-SW | 2d | 2027-01-31 | 2027-02-01 | RHD4CZ7L03SW4100 SS |
| RHD4CZ7L03SW4201 |  | PC works for Air Valve Chamber for HDPE force Main - (RD-L-3)-Z7-L03-SW | 2d | 2027-02-02 | 2027-02-03 | RHD4CZ7L03SW4101 |
| RHD4CZ7L03SW4301 |  | Installation for Air Valve Chamber for HDPE force Main - (RD-L-3)-Z7-L03-SW | 2d | 2027-02-04 | 2027-02-05 | RHD4CZ7L03SW4201 |
| RHD4CZ7L03SW4401 |  | Backfilling works for Air Valve Chamber for HDPE force Main - (RD-L-3)-Z7-L03-SW | 2d | 2027-02-06 | 2027-02-07 | RHD4CZ7L03SW4301, RHD4CZ7L03ST3500, RHD4CZ7L03ST3501 |
|  | 5 | **Discharge Chamber** |  | 2027-01-31 | 2027-02-07 |  |
| RHD4CZ7L03SW4103 |  | Excavation and Bedding for Discharge Chamber for HDPE force Main - (RD-L-3)-Z7-L03-SW | 2d | 2027-01-31 | 2027-02-01 | RHD4CZ7L03SW4101 SS |
| RHD4CZ7L03SW4203 |  | PC works for Discharge Chamber for HDPE force Main - (RD-L-3)-Z7-L03-SW | 2d | 2027-02-02 | 2027-02-03 | RHD4CZ7L03SW4103 |
| RHD4CZ7L03SW4303 |  | Installation for Discharge Chamber for HDPE force Main - (RD-L-3)-Z7-L03-SW | 2d | 2027-02-04 | 2027-02-05 | RHD4CZ7L03SW4203 |
| RHD4CZ7L03SW4403 |  | Backfilling works for Discharge Chamber for HDPE force Main - (RD-L-3)-Z7-L03-SW | 2d | 2027-02-06 | 2027-02-07 | RHD4CZ7L03SW4303 |
|  | 4358 | **RHD4-02-002-L03-(SW)-HDPE Pipes - 250 mm diameter** |  | 2027-01-13 | 2027-02-08 |  |
| RHD4CZ7L03SW2600 |  | Excavation works for HDPE Force Main Pipeline 250 mm - (RD-L-3)-Z7-L03-SW | 4d | 2027-01-13 | 2027-01-17 | RHD4CZ7L03SW1100 |
| RHD4CZ7L03SW2700 |  | Bedding works for HDPE Force Main Pipeline 250 mm - (RD-L-3)-Z7-L03-SW | 4d | 2027-01-18 | 2027-01-21 | RHD4CZ7L03SW2600 |
| RHD4CZ7L03SW2800 |  | Installing for HDPE Force Main Pipeline 250 mm - (RD-L-3)-Z7-L03-SW | 7d | 2027-01-23 | 2027-01-30 | RHD4CZ7L03SW2700 |
| RHD4CZ7L03SW2900 |  | Primary Test for HDPE Force Main Pipeline 250 mm - (RD-L-3)-Z7-L03-SW | 3d | 2027-01-31 | 2027-02-02 | RHD4CZ7L03SW2800 |
| RHD4CZ7L03SW3000 |  | Backfilling and warning tape works for HDPE Force Main Pipeline 250 mm - (RD-L-3)-Z7-L03-SW | 5d | 2027-02-03 | 2027-02-08 | RHD4CZ7L03SW2900 |

| ID | WBS | Task | Duration | Start | Finish | Predecessors |
| --- | --- | --- | --- | --- | --- | --- |
|  | 6444 | **RHD4-02-002-L03-(SW)-MH Works - 1500 mm diameter** |  |  |  |  |
|  | 6442 | **RHD4-02-002-L03-(SW)-MH Works - 1200 mm diameter** |  | 2027-01-18 | 2027-04-11 |  |
| RHD4CZ7L03SW3100 |  | Excavation and PC Blinding works for MH 1200 mm - (RD-L-3)-Z7-L03-SW | 10d | 2027-01-18 | 2027-01-28 | RHD4ENSDZ7APPSW120, RHD4CZ7L03SW2600 |
| RHD4CZ7L03SW3200 |  | Installation of Base for MH 1200 mm - (RD-L-3)-Z7-L03-SW | 17d | 2027-01-30 | 2027-02-17 | RHD4CZ7L03SW3100 |
| RHD4CZ7L03SW3300 |  | MH Ring and C.Slab works and Backfilling works for MH 1200 mm - (RD-L-3)-Z7-L03-SW | 17d | 2027-02-18 | 2027-03-14 | RHD4PRSHLDOSSW1306, RHD4PRSHLSTAGSW1306, RHD4CZ7L03SW3200 |
| RHD4CZ7L03SW3400 |  | Steel Cover for MH 1200 mm - (RD-L-3)-Z7-L03-SW | 7d | 2027-03-15 | 2027-03-22 | RHD4PRSHLDOSSW1406, RHD4PRSHLSTAGSW1406, RHD4CZ7L03SW3300 |
| RHD4CZ7L03SW3500 |  | Finishing, Benching, Testing works for MH 1200 mm - (RD-L-3)-Z7-L03-SW | 17d | 2027-03-23 | 2027-04-11 | RHD4CZ7L03SW3400 |
|  | 6437 | **RHD4-02-002-L03-(SW)-GRP Pipes - 700 mm diameter** |  |  |  |  |
|  | 6434 | **RHD4-02-002-L03-(SW)-GRP Pipes - 400 mm diameter** |  | 2027-01-09 | 2027-01-19 |  |
| RHD4CZ7L03SW1101 |  | Excavation works for GRP Pipe Line 400 mm - (RD-L-3)-Z7-L03-SW | 2d | 2027-01-09 | 2027-01-10 | RHD4ENSDZ7APPSW120, RHD4CZ7L03ST2500 |
| RHD4CZ7L03SW1201 |  | Bedding works for GRP Pipe Line 400 mm - (RD-L-3)-Z7-L03-SW | 2d | 2027-01-11 | 2027-01-12 | RHD4CZ7L03SW1101 |
| RHD4CZ7L03SW1301 |  | Installing for GRP Pipe Line 400 mm - (RD-L-3)-Z7-L03-SW | 2d | 2027-01-13 | 2027-01-14 | RHD4PRSHLSTAGSW1106, RHD4CZ7L03SW1201, RHD4PRSHLDOSSW1306, RHD4PRSHLPOSW1100, RHD4PRSHLDOSSW1106 |
| RHD4CZ7L03SW1401 |  | Primary Test for GRP Pipe Line 400 mm - (RD-L-3)-Z7-L03-SW | 2d | 2027-01-16 | 2027-01-17 | RHD4CZ7L03SW1301 |
| RHD4CZ7L03SW1501 |  | Backfilling and warning tape works for GRP Pipe Line 400 mm - (RD-L-3)-Z7-L03-SW | 2d | 2027-01-18 | 2027-01-19 | RHD4CZ7L03SW1401 |
|  | 6433 | **RHD4-02-002-L03-(SW)-GRP Pipes - 300 mm diameter** |  | 2027-01-11 | 2027-01-21 |  |
| RHD4CZ7L03SW1100 |  | Excavation works for GRP Pipe Line 300 mm - (RD-L-3)-Z7-L03-SW | 2d | 2027-01-11 | 2027-01-12 | RHD4ENSDZ7APPSW120, RHD4CZ7L03SW1101 |
| RHD4CZ7L03SW1200 |  | Bedding works for GRP Pipe Line 300 mm - (RD-L-3)-Z7-L03-SW | 2d | 2027-01-13 | 2027-01-14 | RHD4CZ7L03SW1100 |
| RHD4CZ7L03SW1300 |  | Installing for GRP Pipe Line 300 mm - (RD-L-3)-Z7-L03-SW | 2d | 2027-01-16 | 2027-01-17 | RHD4PRSHLSTAGSW1106, RHD4CZ7L03SW1200, RHD4CZ7L03SW1301, RHD4PRSHLDOSSW1306, RHD4PRSHLPOSW1100, RHD4PRSHLDOSSW1106 |
| RHD4CZ7L03SW1400 |  | Primary Test for GRP Pipe Line 300 mm - (RD-L-3)-Z7-L03-SW | 2d | 2027-01-18 | 2027-01-19 | RHD4CZ7L03SW1300 |
| RHD4CZ7L03SW1500 |  | Backfilling and warning tape works for GRP Pipe Line 300 mm - (RD-L-3)-Z7-L03-SW | 2d | 2027-01-20 | 2027-01-21 | RHD4CZ7L03SW1400, RHD4CZ7L03SW1501 |
|  | 6438 | **RHD4-02-002-L03-(SW)-UPVC Pipes - 200 mm diameter** |  | 2027-01-13 | 2027-01-30 |  |
| RHD4CZ7L03SW2100 |  | Excavation works for UPVC Pipe Line 200 mm - (RD-L-3)-Z7-L03-SW | 3d | 2027-01-13 | 2027-01-16 | RHD4ENSDZ7APPSW120, RHD4CZ7L03SW1100 |
| RHD4CZ7L03SW2200 |  | Bedding works for UPVC Pipe Line 200 mm - (RD-L-3)-Z7-L03-SW | 3d | 2027-01-17 | 2027-01-19 | RHD4CZ7L03SW2100 |
| RHD4CZ7L03SW2300 |  | Installing for UPVC Pipe Line 200 mm - (RD-L-3)-Z7-L03-SW | 4d | 2027-01-20 | 2027-01-24 | RHD4PRSHLSTAGSW1006, RHD4CZ7L03SW2200, RHD4PRSHLPOSW1000, RHD4PRSHLDOSSW1006, RHD4PRSHLDOSSW1306, RHD4PRSHLPOSW1100, RHD4PRSHLDOSSW1106, RHD4PRSHLDOSSW1004, RHD4PRSHLDOSSW1304, RHD4PRSHLDOSSW1104 |
| RHD4CZ7L03SW2400 |  | Primary Test for UPVC Pipe Line 200 mm - (RD-L-3)-Z7-L03-SW | 2d | 2027-01-25 | 2027-01-26 | RHD4CZ7L03SW2300 |
| RHD4CZ7L03SW2500 |  | Backfilling and warning tape works for UPVC Pipe Line 200 mm - (RD-L-3)-Z7-L03-SW | 3d | 2027-01-27 | 2027-01-30 | RHD4CZ7L03SW2400 |
|  | 6441 | **RHD4-02-002-L03-(SW)-Concrete Encasement** |  |  |  |  |
|  | 6469 | **RHD4-02-002-Z7-L03-Potable Network - PT** |  | 2027-01-31 | 2027-04-15 |  |
|  | 6470 | **RHD4-02-002-L03-(PT)-HDPE Pipes - 110 mm diameter** |  | 2027-02-06 | 2027-03-16 |  |
| RHD4CZ7L03PT1100 |  | Excavation works for HDPE Pipline 110 mm - (RD-L-3)-Z7-L03-PT | 2d | 2027-02-06 | 2027-02-07 | RHD4ENSDZ7APPPT130, RHD4ENMSPT2000, RHD4CZ7L03PT1101 |
| RHD4CZ7L03PT1200 |  | Bedding works for HDPE Pipline 110 mm - (RD-L-3)-Z7-L03-PT | 2d | 2027-02-10 | 2027-02-11 | RHD4CZ7L03PT1100, RHD4CZ7L03PT1201 |
| RHD4CZ7L03PT1300 |  | Installing for HDPE Pipline 110 mm - (RD-L-3)-Z7-L03-PT | 2d | 2027-02-18 | 2027-02-20 | RHD4PRSHLDOSPT1000, RHD4PRSHLSTAGPT1000, RHD4CZ7L03PT1200, RHD4CZ7L03PT1301 |
| RHD4CZ7L03PT1400 |  | Primary Test for HDPE Pipline 110 mm - (RD-L-3)-Z7-L03-PT | 2d | 2027-03-04 | 2027-03-06 | RHD4CZ7L03PT1300, RHD4CZ7L03PT1401, RHD4CZ7L03PT5100 |
| RHD4CZ7L03PT1500 |  | Backfilling and warning tape works for HDPE Pipline 110 mm - (RD-L-3)-Z7-L03-PT | 2d | 2027-03-15 | 2027-03-16 | RHD4CZ7L03PT1400, RHD4CZ7L03PT1501 |
|  | 6102 | **RHD4-02-002-L03-(PT)-Air Valve Chambers** |  | 2027-03-24 | 2027-04-01 |  |
| RHD4CZ7L03PT2102 |  | Excavation and Bedding for Air Valve Chambers for Potable Water Network - (RD-L-3)-Z7-L03-PT | 2d | 2027-03-24 | 2027-03-25 | RHD4CZ7L03PT3202 SS |
| RHD4CZ7L03PT2202 |  | PC works for Air Valve Chambers for Potable Water Network - (RD-L-3)-Z7-L03-PT | 2d | 2027-03-27 | 2027-03-28 | RHD4CZ7L03PT2102 |
| RHD4CZ7L03PT2302 |  | Installation for Air Valve Chambers for Potable Water Network - (RD-L-3)-Z7-L03-PT | 2d | 2027-03-29 | 2027-03-30 | RHD4CZ7L03PT2202 |
| RHD4CZ7L03PT2402 |  | Backfilling works for Air Valve Chambers for Potable Water Network - (RD-L-3)-Z7-L03-PT | 2d | 2027-03-31 | 2027-04-01 | RHD4CZ7L03PT2302 |
|  | 6103 | **RHD4-02-002-L03-(PT)-Air Valves** |  | 2027-03-31 | 2027-04-04 |  |
| RHD4CZ7L03PT3103 |  | Installation for Air Valves for Potable Water Network - (RD-L-3)-Z7-L03-PT | 2d | 2027-03-31 | 2027-04-01 | RHD4CZ7L03PT2302 |
| RHD4CZ7L03PT3203 |  | Stem and Service box for Air Valves for Potable Water Network - (RD-L-3)-Z7-L03-PT | 2d | 2027-04-03 | 2027-04-04 | RHD4CZ7L03PT3103, RHD4CZ7L03PT2402 |
|  | 6478 | **RHD4-02-002-L03-(PT)-Wash out Valve Chambers** |  | 2027-03-15 | 2027-03-23 |  |
| RHD4CZ7L03PT2101 |  | Excavation and Bedding for Wash out Valve Chambers for Potable Water Network - (RD-L-3)-Z7-L03-PT | 2d | 2027-03-15 | 2027-03-16 | RHD4ENSDZ7APPPT130, RHD4CZ7L03PT1501 |
| RHD4CZ7L03PT2201 |  | PC works for Wash out Valve Chambers for Potable Water Network - (RD-L-3)-Z7-L03-PT | 2d | 2027-03-17 | 2027-03-18 | RHD4CZ7L03PT2101 |
| RHD4CZ7L03PT2301 |  | Installation for Wash out Valve Chambers for Potable Water Network - (RD-L-3)-Z7-L03-PT | 2d | 2027-03-20 | 2027-03-21 | RHD4PRSHLDOSPT1100, RHD4PRSHLDOSPT1400, RHD4PRSHLSTAGPT1100, RHD4PRSHLSTAGPT1400, RHD4CZ7L03PT2201 |
| RHD4CZ7L03PT2401 |  | Backfilling works for Wash out Valve Chambers for Potable Water Network - (RD-L-3)-Z7-L03-PT | 2d | 2027-03-22 | 2027-03-23 | RHD4CZ7L03PT2301 |
|  | 6479 | **RHD4-02-002-L03-(PT)-Wash out Valves** |  | 2027-03-15 | 2027-03-25 |  |
| RHD4CZ7L03PT3102 |  | Installation for Wash out Valves for Potable Water Network - (RD-L-3)-Z7-L03-PT | 2d | 2027-03-15 | 2027-03-16 | RHD4PRSHLDOSPT1200, RHD4PRSHLSTAGPT1200, RHD4CZ7L03PT2101 SS |
| RHD4CZ7L03PT3202 |  | Stem and Service box for Wash out Valves for Potable Water Network - (RD-L-3)-Z7-L03-PT | 2d | 2027-03-24 | 2027-03-25 | RHD4PRSHLDOSPT1300, RHD4PRSHLSTAGPT1300, RHD4CZ7L03PT3102, RHD4CZ7L03PT2401 |
|  | 6482 | **RHD4-02-002-L03-(PT)-Fire Hydrant** |  | 2027-03-24 | 2027-04-14 |  |
| RHD4CZ7L03PT4100 |  | Excavation and Bedding and Pipe Installation for Fire Hydrant - (RD-L-3)-Z7-L03-PT | 5d | 2027-03-24 | 2027-03-29 | RHD4ENSDZ7APPPT130, RHD4CZ7L03PT1501, RHD4CZ7L03PT1500, RHD4CZ7L03PT2401 |
| RHD4CZ7L03PT4200 |  | Valve Installation for Fire Hydrant - (RD-L-3)-Z7-L03-PT | 4d | 2027-03-30 | 2027-04-03 | RHD4CZ7L03PT4100 |
| RHD4CZ7L03PT4300 |  | Stem for Fire Hydrant - (RD-L-3)-Z7-L03-PT | 4d | 2027-04-04 | 2027-04-07 | RHD4CZ7L03PT4200 |
| RHD4CZ7L03PT4400 |  | Fire Installation for Fire Hydrant - (RD-L-3)-Z7-L03-PT | 4d | 2027-04-08 | 2027-04-12 | RHD4PRSHLDOSPT1500, RHD4PRSHLSTAGPT1500, RHD4CZ7L03PT4300 |
| RHD4CZ7L03PT4500 |  | Protection Barriers for Fire Hydrant - (RD-L-3)-Z7-L03-PT | 2d | 2027-04-13 | 2027-04-14 | RHD4CZ7L03PT4400 |
|  | 6483 | **RHD4-02-002-L03-(PT)-Concrete Encasement** |  | 2027-02-18 | 2027-02-28 |  |
| RHD4CZ7L03PT5100 |  | Pipe Encasement for Potable Pipelines - (RD-L-3)-Z7-L03-PT | 8d | 2027-02-18 | 2027-02-28 | RHD4CZ7L03PT1301 FF, RHD4CZ7L03PT1300 FF, RHD4CZ7L03PT1301 SS, RHD4CZ7L03PT1300 SS, RHD4CZ7L03PT1201 |
|  | 6097 | **RHD4-02-002-L03-(PT)-Gate Valves (Direct Buried)** |  | 2027-04-05 | 2027-04-15 |  |
| RHD4CZ7L03PT3100 |  | Installation for Direct Buried Gate Valves - (RD-L-3)-Z7-L03-PT | 5d | 2027-04-05 | 2027-04-10 | RHD4CZ7L03PT3102 SS, RHD4CZ7L03PT3203 |
| RHD4CZ7L03PT3200 |  | Stem and Service box for Direct Buried Gate Valves - (RD-L-3)-Z7-L03-PT | 5d | 2027-04-11 | 2027-04-15 | RHD4CZ7L03PT3100, RHD4CZ7L03ST3500 |
|  | 6471 | **RHD4-02-002-L03-(PT)-HDPE Pipes - 160 mm diameter** |  | 2027-01-31 | 2027-03-14 |  |
| RHD4CZ7L03PT1101 |  | Excavation works for HDPE Pipline 160 mm - (RD-L-3)-Z7-L03-PT | 5d | 2027-01-31 | 2027-02-04 | RHD4ENSDZ7APPPT130, RHD4ENMSPT2000, RHD4CZ7L03SW2500 |
| RHD4CZ7L03PT1201 |  | Bedding works for HDPE Pipline 160 mm - (RD-L-3)-Z7-L03-PT | 4d | 2027-02-06 | 2027-02-09 | RHD4CZ7L03PT1101 |
| RHD4CZ7L03PT1301 |  | Installing for HDPE Pipline 160 mm - (RD-L-3)-Z7-L03-PT | 7d | 2027-02-10 | 2027-02-17 | RHD4PRSHLDOSPT1000, RHD4PRSHLSTAGPT1000, RHD4CZ7L03PT1201 |
| RHD4CZ7L03PT1401 |  | Primary Test for HDPE Pipline 160 mm - (RD-L-3)-Z7-L03-PT | 3d | 2027-03-01 | 2027-03-03 | RHD4CZ7L03PT1301, RHD4CZ7L03PT5100 |
| RHD4CZ7L03PT1501 |  | Backfilling and warning tape works for HDPE Pipline 160 mm - (RD-L-3)-Z7-L03-PT | 6d | 2027-03-04 | 2027-03-14 | RHD4CZ7L03PT1401 |
|  | 6484 | **RHD4-02-002-Z7-L03-Irrigation Network - IRR** |  | 2027-02-06 | 2027-04-18 |  |
|  | 6485 | **RHD4-02-002-L03-(IRR)-HDPE Pipes - 160 mm diameter** |  | 2027-02-11 | 2027-02-23 |  |
| RHD4CZ7L03IRR1100 |  | Excavation works for HDPE Pipline 160 mm - (RD-L-3)-Z7-L03-IRR | 2d | 2027-02-11 | 2027-02-13 | RHD4ENSDZ7APPIRR140, RHD4ENMSRR2000, RHD4CZ7L03PT1101, RHD4CZ7L03IRR1104 |

| ID | WBS | Task | Duration | Start | Finish | Predecessors |
| --- | --- | --- | --- | --- | --- | --- |
| RHD4CZ7L03IRR1200 |  | Bedding works for HDPE Pipline 160 mm - (RD-L-3)-Z7-L03-IRR | 2d | 2027-02-14 | 2027-02-15 | RHD4CZ7L03IRR1100 |
| RHD4CZ7L03IRR1300 |  | Installing for HDPE Pipline 160 mm - (RD-L-3)-Z7-L03-IRR | 2d | 2027-02-16 | 2027-02-17 | RHD4PRSHLDOSIRR1000, RHD4PRSHLSTAGIRR1000, RHD4CZ7L03IRR1200 |
| RHD4CZ7L03IRR1400 |  | Primary Test for HDPE Pipline 160 mm - (RD-L-3)-Z7-L03-IRR | 2d | 2027-02-18 | 2027-02-20 | RHD4CZ7L03IRR1300 |
| RHD4CZ7L03IRR1500 |  | Backfilling and warning tape works for HDPE Pipline 160 mm - (RD-L-3)-Z7-L03-IRR | 2d | 2027-02-21 | 2027-02-23 | RHD4CZ7L03IRR1400 |
|  | 6489 | **RHD4-02-002-L03-(IRR)-HDPE Pipes - 315 mm diameter** |  | 2027-02-06 | 2027-03-06 |  |
| RHD4CZ7L03IRR1104 |  | Excavation works for HDPE Pipline 315 mm - (RD-L-3)-Z7-L03-IRR | 5d | 2027-02-06 | 2027-02-10 | RHD4ENSDZ7APPIRR140, RHD4ENMSRR2000, RHD4CZ7L03PT1101 |
| RHD4CZ7L03IRR1204 |  | Bedding works for HDPE Pipline 315 mm - (RD-L-3)-Z7-L03-IRR | 5d | 2027-02-11 | 2027-02-16 | RHD4CZ7L03IRR1104 |
| RHD4CZ7L03IRR1304 |  | Installing for HDPE Pipline 315 mm - (RD-L-3)-Z7-L03-IRR | 5d | 2027-02-17 | 2027-02-23 | RHD4PRSHLDOSIRR1000, RHD4PRSHLSTAGIRR1000, RHD4CZ7L03IRR1204 |
| RHD4CZ7L03IRR1404 |  | Primary Test for HDPE Pipline 315 mm - (RD-L-3)-Z7-L03-IRR | 3d | 2027-02-24 | 2027-02-27 | RHD4CZ7L03IRR1304 |
| RHD4CZ7L03IRR1504 |  | Backfilling and warning tape works for HDPE Pipline 315 mm - (RD-L-3)-Z7-L03-IRR | 6d | 2027-02-28 | 2027-03-06 | RHD4CZ7L03IRR1404 |
|  | 6490 | **RHD4-02-002-L03-(IRR)-HDPE Pipes - 400 mm diameter** |  |  |  |  |
|  | 6493 | **RHD4-02-002-L03-(IRR)-Gate Valves (Direct Buried)** |  | 2027-02-20 | 2027-02-27 |  |
| RHD4CZ7L03IRR3100 |  | Installation for Direct Buried Gate Valves - (RD-L-3)-Z7-L03-IRR | 3d | 2027-02-20 | 2027-02-23 | RHD4PRSHLDOSIRR1100, RHD4PRSHLSTAGIRR1100, RHD4CZ7L03IRR1304 SS, RHD4CZ7L03IRR1304 FF, RHD4CZ7L03IRR1300 SS, RHD4CZ7L03IRR1300 FF |
| RHD4CZ7L03IRR3200 |  | Stem and Service box for Direct Buried Gate Valves - (RD-L-3)-Z7-L03-IRR | 3d | 2027-02-24 | 2027-02-27 | RHD4PRSHLDOSIRR1300, RHD4PRSHLSTAGIRR1300, RHD4CZ7L03IRR3100, RHD4CZ7L03IRR1500 |
|  | 6494 | **RHD4-02-002-L03-(IRR)-Butterfly Valve Chamber** |  | 2027-03-07 | 2027-03-18 |  |
| RHD4CZ7L03IRR2100 |  | Excavation and Bedding for Butterfly Valve Chamber for Irrigation Network - (RD-L-3)-Z7-L03-IRR | 2d | 2027-03-07 | 2027-03-08 | RHD4ENSDZ7APPIRR140, RHD4CZ7L03IRR1504, RHD4CZ7L03IRR1500 |
| RHD4CZ7L03IRR2200 |  | PC works for Butterfly Valve Chamber for Irrigation Network - (RD-L-3)-Z7-L03-IRR | 2d | 2027-03-13 | 2027-03-14 | RHD4CZ7L03IRR2100 |
| RHD4CZ7L03IRR2300 |  | Installation for Butterfly Valve Chamber for Irrigation Network - (RD-L-3)-Z7-L03-IRR | 2d | 2027-03-15 | 2027-03-16 | RHD4PRSHLDOSIRR1200, RHD4PRSHLDOSIRR1400, RHD4PRSHLSTAGIRR1200, RHD4PRSHLSTAGIRR1400, RHD4CZ7L03IRR2200 |
| RHD4CZ7L03IRR2400 |  | Backfilling works for Butterfly Valve Chamber for Irrigation Network - (RD-L-3)-Z7-L03-IRR | 2d | 2027-03-17 | 2027-03-18 | RHD4CZ7L03IRR2300, RHD4CZ7C032MV1200, RHD4CZ7C032MV3300 |
|  | 6495 | **RHD4-02-002-L03-(IRR)-Butterfly Valves** |  | 2027-03-17 | 2027-03-21 |  |
| RHD4CZ7L03IRR3101 |  | Installation for Butterfly Valves for Irrigation Network - (RD-L-3)-Z7-L03-IRR | 2d | 2027-03-17 | 2027-03-18 | RHD4PRSHLDOSIRR1100, RHD4PRSHLSTAGIRR1100, RHD4CZ7L03IRR2300 |
| RHD4CZ7L03IRR3201 |  | Stem and Service box for Butterfly Valves for Irrigation Network - (RD-L-3)-Z7-L03-IRR | 2d | 2027-03-20 | 2027-03-21 | RHD4PRSHLDOSIRR1300, RHD4PRSHLSTAGIRR1300, RHD4CZ7L03IRR3101, RHD4CZ7L03IRR2400 |
|  | 6498 | **RHD4-02-002-L03-(IRR)-Air Valve Chamber** |  | 2027-03-07 | 2027-03-18 |  |
| RHD4CZ7L03IRR2102 |  | Excavation and Bedding for Valve Chamber for Irrigation Network - (RD-L-3)-Z7-L03-IRR | 2d | 2027-03-07 | 2027-03-08 | RHD4ENSDZ7APPIRR140, RHD4CZ7L03IRR1504, RHD4CZ7L03IRR1500 |
| RHD4CZ7L03IRR2202 |  | PC works for Valve Chamber for Irrigation Network - (RD-L-3)-Z7-L03-IRR | 2d | 2027-03-13 | 2027-03-14 | RHD4CZ7L03IRR2102 |
| RHD4CZ7L03IRR2302 |  | Installation for Valve Chamber for Irrigation Network - (RD-L-3)-Z7-L03-IRR | 2d | 2027-03-15 | 2027-03-16 | RHD4PRSHLDOSIRR1200, RHD4PRSHLDOSIRR1400, RHD4PRSHLSTAGIRR1200, RHD4PRSHLSTAGIRR1400, RHD4CZ7L03IRR2202 |
| RHD4CZ7L03IRR2402 |  | Backfilling works for Valve Chamber for Irrigation Network - (RD-L-3)-Z7-L03-IRR | 2d | 2027-03-17 | 2027-03-18 | RHD4CZ7L03IRR2302 |
|  | 6499 | **RHD4-02-002-L03-(IRR)-Air Valves** |  | 2027-03-17 | 2027-03-21 |  |
| RHD4CZ7L03IRR3103 |  | Installation for Air Valves for Irrigation Network - (RD-L-3)-Z7-L03-IRR | 2d | 2027-03-17 | 2027-03-18 | RHD4PRSHLDOSIRR1100, RHD4PRSHLSTAGIRR1100, RHD4CZ7L03IRR2302 |
| RHD4CZ7L03IRR3203 |  | Stem and Service box for Air Valves for Irrigation Network - (RD-L-3)-Z7-L03-IRR | 2d | 2027-03-20 | 2027-03-21 | RHD4PRSHLDOSIRR1300, RHD4PRSHLSTAGIRR1300, RHD4CZ7L03IRR3103, RHD4CZ7L03IRR2402 |
|  | 6685 | **RHD4-02-002-L03-(IRR)-Wash out Chamber** |  | 2027-02-11 | 2027-02-20 |  |
| RHD4CZ7L03IRR2101 |  | Excavation and Bedding for Wash out Chamber for Irrigation Network - (RD-L-3)-Z7-L03-IRR | 2d | 2027-02-11 | 2027-02-13 | RHD4CZ7L03IRR1100 SS |
| RHD4CZ7L03IRR2201 |  | PC works for Wash out Chamber for Irrigation Network - (RD-L-3)-Z7-L03-IRR | 2d | 2027-02-14 | 2027-02-15 | RHD4CZ7L03IRR2101 |
| RHD4CZ7L03IRR2301 |  | Installation for Wash out Chamber for Irrigation Network - (RD-L-3)-Z7-L03-IRR | 2d | 2027-02-16 | 2027-02-17 | RHD4CZ7L03IRR2201 |
| RHD4CZ7L03IRR2401 |  | Backfilling works for Wash out Chamber for Irrigation Network - (RD-L-3)-Z7-L03-IRR | 2d | 2027-02-18 | 2027-02-20 | RHD4CZ7L03IRR2301 |
|  | 6686 | **RHD4-02-002-L03-(IRR)-Wash out Valves** |  | 2027-02-18 | 2027-04-18 |  |
| RHD4CZ7L03IRR3102 |  | Installation for Wash out Valve for Irrigation Network - (RD-L-3)-Z7-L03-IRR | 2d | 2027-02-18 | 2027-02-20 | RHD4CZ7L03IRR2301 |
| RHD4CZ7L03IRR3202 |  | Stem and Service box for Wash out Valve for Irrigation Network - (RD-L-3)-Z7-L03-IRR | 2d | 2027-04-17 | 2027-04-18 | RHD4CZ7L03IRR3102, RHD4CZ7L03IRR2401, RHD4CZ7L03PT3200, RHD4CZ7L015SW2500 |
|  | 6518 | **RHD4-02-002-Z7-L03-Medium Voltage Network - MV** |  | 2026-09-13 | 2027-04-08 |  |
|  | 6519 | **RHD4-02-002-L03-(MV)-Medium Voltage cable trench** |  | 2027-02-03 | 2027-03-22 |  |
| RHD4CZ7L03MV1100 |  | Excavation for Medium Voltage Trench - (RD-L-3)-Z7-L03-MV | 15d | 2027-02-03 | 2027-02-20 | RHD4ENSDZ7APPMV150, RHD4CZ7L03RD3100, RHD4CZ8A011MV1100 |
| RHD4CZ7L03MV1200 |  | Trench Backfilling for Medium Voltage Network - (RD-L-3)-Z7-L03-MV | 15d | 2027-03-02 | 2027-03-22 | RHD4CZ7L03MV3200, RHD4CZ7L03MV3101 |
|  | 6520 | **RHD4-02-002-L03-(MV)-Medium Voltage duct banks** |  | 2026-09-13 | 2026-09-27 |  |
| RHD4CZ7L03MV2100 |  | Excavation of Duct Banks for Medium Voltage Network - (RD-L-3)-Z7-L03-MV | 3d | 2026-09-13 | 2026-09-15 | RHD4ENSDZ7APPMV150, RHD4CZ7L03RD3100 |
| RHD4CZ7L03MV2200 |  | Installation of Duct Banks for Medium Voltage Network - (RD-L-3)-Z7-L03-MV | 4d | 2026-09-16 | 2026-09-20 | RHD4PRSHLDOSMV1000, RHD4PRSHLSTAGMV1000, RHD4CZ7L03MV2100 |
| RHD4CZ7L03MV2300 |  | Pouring of Duct Banks for Medium Voltage Network - (RD-L-3)-Z7-L03-MV | 3d | 2026-09-21 | 2026-09-24 | RHD4CZ7L03MV2200 |
| RHD4CZ7L03MV2400 |  | Backfilling of Duct Banks for Medium Voltage Network - (RD-L-3)-Z7-L03-MV | 2d | 2026-09-26 | 2026-09-27 | RHD4CZ7L03MV2300 |
|  | 6521 | **RHD4-02-002-L03-(MV)-Medium Voltage cables 3Cx 500 mm²** |  | 2027-02-21 | 2027-04-08 |  |
| RHD4CZ7L03MV3100 |  | Installation of Medium Voltage Cables 3Cx 500 mm² - (RD-L-3)-Z7-L03-MV | 3d | 2027-02-21 | 2027-02-24 | RHD4PRSHLDOSMV1100, RHD4ENMSMV2000, RHD4ENMSMV2010, RHD4PRSHLSTAGMV1100, RHD4CZ7L03MV1100 |
| RHD4CZ7L03MV3200 |  | Joints Installation of Medium Voltage Cables 3Cx 500 mm² - (RD-L-3)-Z7-L03-MV | 4d | 2027-02-25 | 2027-03-01 | RHD4PRSHLDOSMV1300, RHD4PRSHLSTAGMV1300, RHD4CZ7L03MV3100 |
| RHD4CZ7L03MV3300 |  | Testing of Medium Voltage Cables 3Cx 500 mm² - (RD-L-3)-Z7-L03-MV | 3d | 2027-03-23 | 2027-03-25 | RHD4CZ7L03MV3200, RHD4CZ7L03MV1200, RHD4CZ7L03MV4200 |
| RHD4CZ7L03MV3400 |  | Termination of Medium Voltage Cables 3Cx 500 mm² - (RD-L-3)-Z7-L03-MV | 2d | 2027-04-07 | 2027-04-08 | RHD4CZ7L03MV3300, RHD4CZ7L03MV5400 |
|  | 6522 | **RHD4-02-002-L03-(MV)-Medium Voltage cables 3Cx 50 mm²** |  | 2027-02-21 | 2027-04-08 |  |
| RHD4CZ7L03MV3101 |  | Installation of Medium Voltage Cables 3Cx 50 mm² - (RD-L-3)-Z7-L03-MV | 2d | 2027-02-21 | 2027-02-23 | RHD4PRSHLDOSMV1200, RHD4ENMSMV2000, RHD4ENMSMV2010, RHD4PRSHLSTAGMV1200, RHD4CZ7L03MV1100 |
| RHD4CZ7L03MV3301 |  | Testing of Medium Voltage Cables 3Cx 50 mm² - (RD-L-3)-Z7-L03-MV | 2d | 2027-02-24 | 2027-02-25 | RHD4CZ7L03MV3101 |
| RHD4CZ7L03MV3401 |  | Termination of Medium Voltage Cables 3Cx 50 mm² - (RD-L-3)-Z7-L03-MV | 2d | 2027-04-07 | 2027-04-08 | RHD4CZ7L03MV3301, RHD4CZ7L03MV5400 |
|  | 6523 | **RHD4-02-002-L03-(MV)-Normally open Point (Outdoor Type)** |  | 2027-02-23 | 2027-02-27 |  |
| RHD4CZ7L03MV4100 |  | Installation for Normally open Point - (RD-L-3)-Z7-L03-MV | 2d | 2027-02-23 | 2027-02-24 | RHD4PRSHLDOSMV1400, RHD4PRSHLSTAGMV1400, RHD4CZ7L03MV3101 SS, RHD4CZ7L03MV3100 FF |
| RHD4CZ7L03MV4200 |  | Termination for Normally open Point - (RD-L-3)-Z7-L03-MV | 2d | 2027-02-25 | 2027-02-27 | RHD4CZ7L03MV4100 |
|  | 6524 | **RHD4-02-002-L03-(MV)-Unit Substations** |  | 2027-03-23 | 2027-04-06 |  |
| RHD4CZ7L03MV5100 |  | Excavation for Unit Substations for Medium Voltage Network - (RD-L-3)-Z7-L03-MV | 2d | 2027-03-23 | 2027-03-24 | RHD4ENSDZ7APPMV150, RHD4CZ7L03MV1200, RHD4CZ7L03MV4200 |
| RHD4CZ7L03MV5200 |  | Concrete Base Placement for Unit Substations for Medium Voltage Network - (RD-L-3)-Z7-L03-MV | 2d | 2027-03-25 | 2027-03-27 | RHD4CZ7L03MV5100 |
| RHD4CZ7L03MV5300 |  | Installation for Fences and doors for Medium Voltage Network - (RD-L-3)-Z7-L03-MV | 5d | 2027-03-28 | 2027-04-01 | RHD4CZ7L03MV5200 |
| RHD4CZ7L03MV5400 |  | Installation for Unit Substations for Medium Voltage Network - (RD-L-3)-Z7-L03-MV | 4d | 2027-04-03 | 2027-04-06 | RHD4PRLOLSTAGMV1601, RHD4PRLOLSTAGMV1602, RHD4CZ7L03MV5300 |
|  | 6525 | **RHD4-02-002-Z7-L03-Low Voltage Network - LV** |  | 2026-12-15 | 2027-01-11 |  |
|  | 6526 | **RHD4-02-002-L03-(LV)-Low Voltage duct banks** |  |  |  |  |
|  | 6527 | **RHD4-02-002-L03-(LV)-Low Voltage Drawpit** |  | 2026-12-15 | 2026-12-19 |  |
| RHD4CZ7L03LV5100 |  | Excavation of Drawpit size 900x900x1000mm for Low Voltage Network - (RD-L-3)-Z7-L03-LV | 2d | 2026-12-15 | 2026-12-16 | RHD4ENSDZ7APPLV160, RHD4CZ7L03RD3100, RHD4CZ7L03ST1107 |
| RHD4CZ7L03LV5200 |  | Installation of Drawpit size 900x900x1000mm for Low Voltage Network - (RD-L-3)-Z7-L03-LV | 2d | 2026-12-17 | 2026-12-19 | RHD4PRSHLDOSLV1400, RHD4PRSHLSTAGLV1400, RHD4CZ7L03LV5100 |
|  | 6528 | **RHD4-02-002-L03-(LV)-Low Voltage cables** |  | 2026-12-20 | 2027-01-04 |  |

| ID | WBS | Task | Duration | Start | Finish | Predecessors |
| --- | --- | --- | --- | --- | --- | --- |
| RHD4CZ7L03LV3100 |  | Excavation for Low Voltage Cables for Low Voltage Network - (RD-L-3)-Z7-L03-LV | 4d | 2026-12-20 | 2026-12-23 | RHD4ENSDZ7APPLV160, RHD4CZ7L03LV5200 |
| RHD4CZ7L03LV3200 |  | Cable Laying of Low Voltage Cables for Low Voltage Network - (RD-L-3)-Z7-L03-LV | 4d | 2026-12-24 | 2026-12-28 | RHD4PRSHLDOSLV1100, RHD4ENMSLV2000, RHD4ENMSLV2010, RHD4PRSHLSTAGLV1100, RHD4CZ7L03LV3100 |
| RHD4CZ7L03LV3300 |  | Warning tape and Backfill for Low Voltage Cables for Low Voltage Network - (RD-L-3)-Z7-L03-LV | 4d | 2026-12-29 | 2027-01-02 | RHD4CZ7L03LV3200 |
| RHD4CZ7L03LV3400 |  | Testing of Low Voltage Cables for Low Voltage Network - (RD-L-3)-Z7-L03-LV | 2d | 2027-01-03 | 2027-01-04 | RHD4CZ7L03LV3300 |
|  | 6529 | **RHD4-02-002-L03-(LV)-Low Voltage Distribution Pillars** |  | 2027-01-05 | 2027-01-11 |  |
| RHD4CZ7L03LV4100 |  | Leveling for Distribution Pillars for Low Voltage Network - (RD-L-3)-Z7-L03-LV | 2d | 2027-01-05 | 2027-01-06 | RHD4CZ7L03LV3400 |
| RHD4CZ7L03LV4200 |  | Lean Concrete for Distribution Pillars for Low Voltage Network - (RD-L-3)-Z7-L03-LV | 2d | 2027-01-07 | 2027-01-09 | RHD4CZ7L03LV4100 |
| RHD4CZ7L03LV4300 |  | Installation of Distribution Pillars for Low Voltage Network - (RD-L-3)-Z7-L03-LV | 2d | 2027-01-10 | 2027-01-11 | RHD4PRSHLDOSLV1200, RHD4PRSHLDOSLV1300, RHD4PRSHLSTAGLV1200, RHD4PRSHLSTAGLV1300, RHD4CZ7L03LV4200 |
|  | 6530 | **RHD4-02-002-L03-(LV)-Low Voltage Distribution Pillars Earthing** |  |  |  |  |
|  | 6531 | **RHD4-02-002-Z7-L03-Street Lighting Network - SL** |  | 2026-09-16 | 2027-02-08 |  |
|  | 6532 | **RHD4-02-002-L03-(SL)-Street Lighting duct banks** |  | 2026-09-16 | 2026-09-26 |  |
| RHD4CZ7L03SL2100 |  | Excavation of Duct Banks for Street Lighting Network - (RD-L-3)-Z7-L03-SL | 2d | 2026-09-16 | 2026-09-17 | RHD4ENSDZ7APPSL170, RHD4CZ7L03MV2100 |
| RHD4CZ7L03SL2200 |  | Installation of Duct Banks for Street Lighting Network - (RD-L-3)-Z7-L03-SL | 2d | 2026-09-19 | 2026-09-20 | RHD4PRSHLDOSSL1000, RHD4PRSHLSTAGSL1000, RHD4CZ7L03SL2100 |
| RHD4CZ7L03SL2300 |  | Pouring of Duct Banks for Street Lighting Network - (RD-L-3)-Z7-L03-SL | 2d | 2026-09-21 | 2026-09-22 | RHD4CZ7L03SL2200 |
| RHD4CZ7L03SL2400 |  | Backfilling of Duct Banks for Street Lighting Network - (RD-L-3)-Z7-L03-SL | 2d | 2026-09-24 | 2026-09-26 | RHD4CZ7L03SL2300 |
|  | 6533 | **RHD4-02-002-L03-(SL)-Street Lighting Drawpit** |  | 2027-01-12 | 2027-01-16 |  |
| RHD4CZ7L03SL5100 |  | Excavation of Drawpit size 600x600x900mm for Street Lighting Network - (RD-L-3)-Z7-L03-SL | 2d | 2027-01-12 | 2027-01-13 | RHD4ENSDZ7APPSL170, RHD4CZ7L03ST1502, RHD4CZ7L03SL2300, RHD4CZ7L03LV4300 |
| RHD4CZ7L03SL5200 |  | Installation of Drawpit size 600x600x900mm for Street Lighting Network - (RD-L-3)-Z7-L03-SL | 2d | 2027-01-14 | 2027-01-16 | RHD4PRSHLDOSSL1400, RHD4PRSHLSTAGSL1400, RHD4CZ7L03SL5100 |
|  | 6534 | **RHD4-02-002-L03-(SL)-Street Lighting cables** |  | 2027-01-17 | 2027-01-25 |  |
| RHD4CZ7L03SL3100 |  | Excavation for Street Lighting Cables for Street Lighting Network - (RD-L-3)-Z7-L03-SL | 2d | 2027-01-17 | 2027-01-18 | RHD4ENSDZ7APPSL170, RHD4CZ7L03SL5200 |
| RHD4CZ7L03SL3200 |  | Cable Laying of Street Lighting Cables for Street Lighting Network - (RD-L-3)-Z7-L03-SL | 2d | 2027-01-19 | 2027-01-20 | RHD4PRSHLDOSSL1100, RHD4ENMSSL2000, RHD4ENMSSL2010, RHD4PRSHLSTAGSL1100, RHD4CZ7L03SL3100 |
| RHD4CZ7L03SL3300 |  | Warning tape and Backfill for Street Lighting Cables for Street Lighting Network - (RD-L-3)-Z7-L03-SL | 2d | 2027-01-21 | 2027-01-23 | RHD4CZ7L03SL3200 |
| RHD4CZ7L03SL3400 |  | Testing of Street Lighting Cables for Street Lighting Network - (RD-L-3)-Z7-L03-SL | 2d | 2027-01-24 | 2027-01-25 | RHD4CZ7L03SL3300 |
|  | 6535 | **RHD4-02-002-L03-(SL)-Street Lighting Poles** |  | 2027-01-26 | 2027-02-08 |  |
| RHD4CZ7L03SL1100 |  | Excavation for RC Base for Lighting Poles for Street Lighting Network - (RD-L-3)-Z7-L03-SL | 2d | 2027-01-26 | 2027-01-27 | RHD4ENSDZ7APPSL170, RHD4CZ7L03SL3400 |
| RHD4CZ7L03SL1200 |  | Installation for RC Base for Lighting Poles for Street Lighting Network - (RD-L-3)-Z7-L03-SL | 2d | 2027-01-28 | 2027-01-30 | RHD4CZ7L03SL1100 |
| RHD4CZ7L03SL1300 |  | Backfill for RC Base for Lighting Poles for Street Lighting Network - (RD-L-3)-Z7-L03-SL | 2d | 2027-01-31 | 2027-02-01 | RHD4CZ7L03SL1200 |
| RHD4CZ7L03SL1400 |  | Installation for Lighting Poles for Street Lighting Network - (RD-L-3)-Z7-L03-SL | 2d | 2027-02-02 | 2027-02-03 | RHD4PRSHLDOSSL1200, RHD4ENMSSL2000, RHD4ENMSSL2010, RHD4PRSHLSTAGSL1200, RHD4CZ7L03SL1300, RHD4CZ7L03SL3400 |
| RHD4CZ7L03SL1500 |  | Luminaire Installation for Lighting Poles for Street Lighting Network - (RD-L-3)-Z7-L03-SL | 2d | 2027-02-07 | 2027-02-08 | RHD4PRSHLDOSSL1300, RHD4PRSHLSTAGSL1300, RHD4CZ7L03SL1400, RHD4CZ7L03SL6100 |
|  | 6537 | **RHD4-02-002-L03-(SL)-Street Lighting Earthing System** |  | 2027-02-04 | 2027-02-06 |  |
| RHD4CZ7L03SL6100 |  | Installation of Earthing for Lighting Poles and Fedder Pillers for Street Lighting Network - (RD-L-3)-Z7-L03-SL | 2d | 2027-02-04 | 2027-02-06 | RHD4ENMSER2000, RHD4ENMSER2010, RHD4CZ7L03SL1400 |
|  | 5023 | **RHD4-02-002-L03-(SL)-Street Lighting Feeder Pillars** |  |  |  |  |
|  | 6543 | **RHD4-02-002-Z7-L03-Telecommunications Network - TC** |  | 2026-08-16 | 2027-03-20 |  |
|  | 6544 | **RHD4-02-002-L03-(TC)-Telecommunications Ducts** |  | 2027-02-09 | 2027-03-20 |  |
| RHD4CZ7L03TC2100 |  | Excavation of HDPE Ducts for Telecom Network - (RD-L-3)-Z7-L03-TC | 6d | 2027-02-09 | 2027-02-15 | RHD4ENSDZ7APPTC190, RHD4CZ7L03TC3400, RHD4CZ7L03SL1500 |
| RHD4CZ7L03TC2200 |  | Installation of HDPE Ducts for Telecom Network - (RD-L-3)-Z7-L03-TC | 7d | 2027-02-16 | 2027-02-24 | RHD4PRSHLDOSTC1000, RHD4PRSHLSTAGTC1000, RHD4CZ7L03TC2100 |
| RHD4CZ7L03TC2400 |  | Backfilling of HDPE Ducts for Telecom Network - (RD-L-3)-Z7-L03-TC | 12d | 2027-03-03 | 2027-03-20 | RHD4CZ7L03TC2200, RHD4CZ7L03TC5200 |
|  | 6545 | **RHD4-02-002-L03-(TC)-Telecommunications Manholes** |  | 2027-02-16 | 2027-03-02 |  |
| RHD4CZ7L03TC5100 |  | Excavation for Manholes for Telecom Network - (RD-L-3)-Z7-L03-TC | 6d | 2027-02-16 | 2027-02-23 | RHD4ENSDZ7APPTC190, RHD4CZ7L03TC2100 |
| RHD4CZ7L03TC5200 |  | Installation of Manholes for Telecom Network - (RD-L-3)-Z7-L03-TC | 6d | 2027-02-24 | 2027-03-02 | RHD4PRSHLDOSTC1200, RHD4PRSHLSTAGTC1200, RHD4CZ7L03TC5100, RHD4CZ7L03TC2200 SS |
|  | 6546 | **RHD4-02-002-L03-(TC)-Telecomminications Road Crossings** |  | 2026-08-16 | 2026-08-26 |  |
| RHD4CZ7L03TC3100 |  | Excavation for Road Crossings for Telecom Network - (RD-L-3)-Z7-L03-TC | 2d | 2026-08-16 | 2026-08-17 | RHD4ENSDZ7APPTC190, RHD4CZ7L03ST1108 |
| RHD4CZ7L03TC3200 |  | Installation of Road Crossings for Telecom Network - (RD-L-3)-Z7-L03-TC | 3d | 2026-08-18 | 2026-08-20 | RHD4PRSHLDOSTC1100, RHD4PRSHLSTAGTC1100, RHD4CZ7L03TC3100 |
| RHD4CZ7L03TC3300 |  | Pouring of Road Crossings for Telecom Network - (RD-L-3)-Z7-L03-TC | 3d | 2026-08-22 | 2026-08-24 | RHD4CZ7L03TC3200 |
| RHD4CZ7L03TC3400 |  | Backfilling of Road Crossings for Telecom Network - (RD-L-3)-Z7-L03-TC | 2d | 2026-08-25 | 2026-08-26 | RHD4CZ7L03TC3300 |
|  | 6547 | **RHD4-02-002-Z7-L03-Information and Communication Technologies - ICT** |  | 2026-08-16 | 2027-04-24 |  |
|  | 6548 | **RHD4-02-002-L03-(ICT)-Information and Communication Technologies Ducts** |  | 2027-03-21 | 2027-04-24 |  |
| RHD4CZ7L03ICT2100 |  | Excavation of HDPE Ducts for ICT Network - (RD-L-3)-Z7-L03-ICT | 8d | 2027-03-21 | 2027-03-29 | RHD4ENSDZ7APPICT200, RHD4CZ7L03ICT3400, RHD4CZ7L03TC2400 |
| RHD4CZ7L03ICT2200 |  | Installation of HDPE Ducts for ICT Network - (RD-L-3)-Z7-L03-ICT | 8d | 2027-03-30 | 2027-04-07 | RHD4PRSHLDOSICT1000, RHD4PRSHLSTAGICT1000, RHD4CZ7L03ICT2100 |
| RHD4CZ7L03ICT2400 |  | Backfilling of HDPE Ducts for ICT Network - (RD-L-3)-Z7-L03-ICT | 8d | 2027-04-15 | 2027-04-24 | RHD4CZ7L03ICT2200, RHD4CZ7L03ICT5200 |
|  | 6549 | **RHD4-02-002-L03-(ICT)-Information and Communication Technologies Manholes** |  | 2027-03-30 | 2027-04-14 |  |
| RHD4CZ7L03ICT5100 |  | Excavation for Manholes for ICT Network - (RD-L-3)-Z7-L03-ICT | 7d | 2027-03-30 | 2027-04-06 | RHD4ENSDZ7APPICT200, RHD4CZ7L03ICT2100 |
| RHD4CZ7L03ICT5200 |  | Installation of Manholes for ICT Network - (RD-L-3)-Z7-L03-ICT | 7d | 2027-04-07 | 2027-04-14 | RHD4PRSHLDOSICT1200, RHD4PRSHLSTAGICT1200, RHD4CZ7L03ICT5100 |
|  | 6550 | **RHD4-02-002-L03-(ICT)-Information and Communication Technologies Road Crossings** |  | 2026-08-16 | 2026-08-26 |  |
| RHD4CZ7L03ICT3100 |  | Excavation for Road Crossings for ICT Network - (RD-L-3)-Z7-L03-ICT | 2d | 2026-08-16 | 2026-08-17 | RHD4ENSDZ7APPICT200, RHD4CZ7L03ST1108 |
| RHD4CZ7L03ICT3200 |  | Installation of Road Crossings for ICT Network - (RD-L-3)-Z7-L03-ICT | 3d | 2026-08-18 | 2026-08-20 | RHD4PRSHLDOSICT1100, RHD4PRSHLSTAGICT1100, RHD4CZ7L03ICT3100 |
| RHD4CZ7L03ICT3300 |  | Pouring of Road Crossings for ICT Network - (RD-L-3)-Z7-L03-ICT | 3d | 2026-08-22 | 2026-08-24 | RHD4CZ7L03ICT3200 |
| RHD4CZ7L03ICT3400 |  | Backfilling of Road Crossings for ICT Network - (RD-L-3)-Z7-L03-ICT | 2d | 2026-08-25 | 2026-08-26 | RHD4CZ7L03ICT3300 |
|  | 6538 | **RHD4-02-002-Z7-L03-Landscape Network - LS** |  |  |  |  |
|  | 6539 | **RHD4-02-002-L03-(LS)-Landscape Lighting cables** |  |  |  |  |
|  | 6541 | **RHD4-02-002-L03-(LS)-Landscape Bollard Poles** |  |  |  |  |
|  | 6551 | **RHD4-02-002-Z7-L03-Security Network - CCTV** |  | 2027-04-25 | 2027-05-27 |  |
|  | 6552 | **RHD4-02-002-L03-(CCTV)-Civil Works** |  | 2027-04-25 | 2027-04-29 |  |
| RHD4CZ7L03CCTV2100 |  | Civil Works for Security Network - (RD-L-3)-Z7-L03-CCTV | 5d | 2027-04-25 | 2027-04-29 | RHD4CZ7L03ICT2400, RHD4CZ7L03TC2400, RHD4CZ7L03MV3401, RHD4CZ7L03MV3400 |
|  | 6553 | **RHD4-02-002-L03-(CCTV)-CCTV Poles** |  | 2027-05-01 | 2027-05-11 |  |
| RHD4CZ7L03CCTV1100 |  | Excavation for RC Base for CCTV Poles for Security Network - (RD-L-3)-Z7-L03-CCTV | 2d | 2027-05-01 | 2027-05-02 | RHD4ENSDZ7APPCCTV210, RHD4CZ7L03CCTV2100 |
| RHD4CZ7L03CCTV1200 |  | Installation for RC Base for CCTV Poles for Security Network - (RD-L-3)-Z7-L03-CCTV | 2d | 2027-05-03 | 2027-05-04 | RHD4CZ7L03CCTV1100 |
| RHD4CZ7L03CCTV1300 |  | Backfill for RC Base for CCTV Poles for Security Network - (RD-L-3)-Z7-L03-CCTV | 2d | 2027-05-05 | 2027-05-06 | RHD4CZ7L03CCTV1200 |
| RHD4CZ7L03CCTV1400 |  | Installation for CCTV Poles for Security Network - (RD-L-3)-Z7-L03-CCTV | 2d | 2027-05-08 | 2027-05-09 | RHD4PRSHLDOSCCTV1000, RHD4PRSHLSTACCTV1000, RHD4CZ7L03CCTV1300 |
| RHD4CZ7L03CCTV1500 |  | Protection post Installation for CCTV Poles for Security Network - (RD-L-3)-Z7-L03-CCTV | 2d | 2027-05-10 | 2027-05-11 | RHD4CZ7L03CCTV1400 |

| ID | WBS | Task | Duration | Start | Finish | Predecessors |
| --- | --- | --- | --- | --- | --- | --- |
|  | 6554 | **RHD4-02-002-L03-(CCTV)-Camera** |  | 2027-05-12 | 2027-05-13 |  |
| RHD4CZ7L03CCTV3100 |  | Installation for Cameras for Security Network - (RD-L-3)-Z7-L03-CCTV | 2d | 2027-05-12 | 2027-05-13 | RHD4PRSHLDOSCCTV1100, RHD4PRSHLSTACCTV1100, RHD4CZ7L03CCTV1400, RHD4CZ7L03CCTV4100 |
|  | 6555 | **RHD4-02-002-L03-(CCTV)-Power and Infrastructure** |  | 2027-05-10 | 2027-05-13 |  |
| RHD4CZ7L03CCTV4100 |  | Installation of Power outlet, UPS and midspan for PTZ Camerafor Cameras for Security Network - (RD-L-3)-Z7-L03-CCTV | 2d | 2027-05-10 | 2027-05-11 | RHD4PRSHLDOSCCTV1300, RHD4PRSHLSTACCTV1300, RHD4CZ7L03CCTV1400 |
| RHD4CZ7L03CCTV4200 |  | Short Range Wireless PoP wireless Bridgefor CCTV Poles for Security Network - (RD-L-3)-Z7-L03-CCTV | 2d | 2027-05-12 | 2027-05-13 | RHD4CZ7L03CCTV4100 |
|  | 6557 | **RHD4-02-002-L03-(CCTV)-CCTV Panels and Components** |  | 2027-05-19 | 2027-05-27 |  |
| RHD4CZ7L03CCTV6100 |  | Installation for CCTV Panels for Security Network - (RD-L-3)-Z7-L03-CCTV | 8d | 2027-05-19 | 2027-05-27 | RHD4PRSHLDOSCCTV1200, RHD4PRSHLSTACCTV1200, RHD4PRLOLSTACCTV1001, RHD4CZ7L03CCTV4200, RHD4CZ7L03CCTV3100 |
|  | 6757 | **RHD4-02-002-Z7-L131** |  | 2026-08-16 | 2027-08-23 |  |
|  | 6788 | **RHD4-02-002-Z7-L131-Crossings Sewage Network - SWCr** |  |  |  |  |
|  | 6800 | **RHD4-02-002-L131-(SWCr)-MH Works - 1500 mm diameter** |  |  |  |  |
|  | 6798 | **RHD4-02-002-L131-(SWCr)-MH Works - 1200 mm diameter** |  |  |  |  |
|  | 6801 | **RHD4-02-002-L131-(SWCr)-MH Works - 1500 mm diameter with Back drop** |  |  |  |  |
|  | 6793 | **RHD4-02-002-L131-(SWCr)-GRP Pipes - 700 mm diameter** |  |  |  |  |
|  | 6794 | **RHD4-02-002-L131-(SWCr)-UPVC Pipes - 200 mm diameter** |  |  |  |  |
|  | 6832 | **RHD4-02-002-Z7-L131-Crossings Potable Network - PTCr** |  |  |  |  |
|  | 6833 | **RHD4-02-002-L131-(PTCr)-HDPE Pipes - 110 mm diameter** |  |  |  |  |
|  | 6834 | **RHD4-02-002-L131-(PTCr)-HDPE Pipes - 160 mm diameter** |  |  |  |  |
|  | 6838 | **RHD4-02-002-L131-(PTCr)-Gate Valves (Direct Buried)** |  |  |  |  |
|  | 6845 | **RHD4-02-002-L131-(PTCr)-Fire Hydrant** |  |  |  |  |
|  | 6879 | **RHD4-02-002-Z7-L131-Crossings Irrigation Network - IRRC** |  |  |  |  |
|  | 6880 | **RHD4-02-002-L131-(IRRC)-HDPE Pipes - 160 mm diameter** |  |  |  |  |
|  | 6881 | **RHD4-02-002-L131-(IRRC)-HDPE Pipes - 180 mm diameter** |  |  |  |  |
|  | 6888 | **RHD4-02-002-L131-(IRRC)-Gate Valves (Direct Buried)** |  |  |  |  |
|  | 6891 | **RHD4-02-002-L131-(IRRC)-Wash out Chamber** |  |  |  |  |
|  | 6892 | **RHD4-02-002-L131-(IRRC)-Wash out Valves** |  |  |  |  |
|  | 6936 | **RHD4-02-002-Z7-L131-Road Works - RD** |  | 2026-08-27 | 2027-08-21 |  |
|  | 6937 | **RHD4-02-002-L131-(RD)-Subgrade** |  | 2026-08-27 | 2026-08-31 |  |
| RHD4CZ7L131RD1100 |  | Supply, lay and compaction subgrade compacted thickness 300 mm for Roads - (RD-L-13/1)-Z7-L131-RD | 4d | 2026-08-27 | 2026-08-31 | RHD4ENSDZ7APPEW100, RHD4ENSDZ7APPRD220, RHD4CZ7L131ST1505 |
|  | 6938 | **RHD4-02-002-L131-(RD)-Aggregate Base Course** |  | 2026-09-01 | 2026-09-06 |  |
| RHD4CZ7L131RD2100 |  | Supply, lay and compaction Aggregate base course compacted thickness 300 mmfor Roads - (RD-L-13/1)-Z7-L131-RD | 5d | 2026-09-01 | 2026-09-06 | RHD4PRSHLDOSRD1000, RHD4PRSHLSTAGRD1000, RHD4CZ7L131RD1100 |
|  | 6939 | **RHD4-02-002-L131-(RD)-Bituminous base course Two Layers, including (MC1)&(RC2)** |  | 2026-09-07 | 2027-06-01 |  |
| RHD4CZ7L131RD3100 |  | Supply, lay and Asphaltic base course including Prime Coat (MC1) for 1st Layer - (RD-L-13/1)-Z7-L131-RD | 2d | 2026-09-07 | 2026-09-08 | RHD4PRSHLDOSRD1100, RHD4ENMSASPH2000, RHD4ENMSASPH2010, RHD4PRSHLSTAGRD1100, RHD4CZ7L131RD2100 |
| RHD4CZ7L131RD3200 |  | Supply, lay and Asphaltic base course including Tack Coat (RC2) for 2nd Layer - (RD-L-13/1)-Z7-L131-RD | 2d | 2027-05-31 | 2027-06-01 | RHD4PRSHLDOSRD1100, RHD4PRSHLSTAGRD1100, RHD4CZ7L131RD3100, RHD4CZ7L03RD3200 |
|  | 6941 | **RHD4-02-002-L131-(RD)-Precast Concrete Curb** |  | 2027-06-10 | 2027-06-16 |  |
| RHD4CZ7L131RD5100 |  | Supply and installation Precast Concrete Kerb for Roads - (RD-L-13/1)-Z7-L131-RD | 6d | 2027-06-10 | 2027-06-16 | RHD4PRSHLDOSRD1200, RHD4ENMSRD2000, RHD4ENMSRD2010, RHD4PRSHLSTAGRD1200, RHD4CZ7L131RD3200, RHD4CZ7L03RD5100 |
|  | 6944 | **RHD4-02-002-L131-(RD)-Traffic Signage** |  | 2027-07-26 | 2027-08-01 |  |
| RHD4CZ7L131RD8100 |  | Installation of Traffic Signage for Road Network - (RD-L-13/1)-Z7-L131-RD | 6d | 2027-07-26 | 2027-08-01 | RHD4PRSHLDOSRD1600, RHD4PRSHLSTAGRD1600, RHD4CZ7L131RD5100, RHD4CZ7L131TC2400, RHD4CZ7L131ICT2400, RHD4CZ7L03RD8100 |
|  | 6942 | **RHD4-02-002-L131-(RD)-Precast Interlocking Block Pavers** |  | 2027-08-02 | 2027-08-07 |  |
| RHD4CZ7L131RD6100 |  | Interlocking block pavers for sidewalk-footpath for Side walks and Parking areas - (RD-L-13/1)-Z7-L131-RD | 5d | 2027-08-02 | 2027-08-07 | RHD4PRSHLDOSRD1300, RHD4PRSHLDOSRD1400, RHD4ENMSRD2000, RHD4ENMSRD2010, RHD4PRSHLSTAGRD1300, RHD4PRSHLSTAGRD1400, RHD4CZ7L131RD8100, RHD4CZ7L03RD6100 |
|  | 6940 | **RHD4-02-002-L131-(RD)-Bituminous concrete wearing course including tack coat (RC2)** |  | 2027-08-15 | 2027-08-16 |  |
| RHD4CZ7L131RD4100 |  | Supply, lay and compaction Asphaltic wearing course including tack Coat (RC2)for Road Network - (RD-L-13/1)-Z7-L131-RD | 2d | 2027-08-15 | 2027-08-16 | RHD4CZ7L131RD5100, RHD4CZ7L131RD6100, RHD4CZ7L03RD4100, RHD4CZ7L131CTV4200 |
|  | 6943 | **RHD4-02-002-L131-(RD)-Pavement Marking** |  | 2027-08-17 | 2027-08-21 |  |
| RHD4CZ7L131RD7100 |  | Pavement Markings for Road Network - (RD-L-13/1)-Z7-L131-RD | 4d | 2027-08-17 | 2027-08-21 | RHD4PRSHLDOSRD1500, RHD4PRSHLSTAGRD1500, RHD4CZ7L131RD4100 |
|  | 6761 | **RHD4-02-002-Z7-L131-Storm Network - ST** |  | 2026-08-16 | 2027-01-26 |  |
|  | 6779 | **RHD4-02-002-L131-(ST)-MH Works - 1500 mm diameter** |  | 2027-01-04 | 2027-01-26 |  |
| RHD4CZ7L131ST3101 |  | Excavation and PC Blinding works for MH 1500 mm - (RD-L-13/1)-Z7-L131-ST | 4d | 2027-01-04 | 2027-01-07 | RHD4ENSDZ7APPST110, RHD4ENMSST2000, RHD4CZ7L131ST2100 |
| RHD4CZ7L131ST3201 |  | Installation of Base for MH 1500 mm - (RD-L-13/1)-Z7-L131-ST | 4d | 2027-01-09 | 2027-01-12 | RHD4PRSHLSTAGST1606, RHD4CZ7L131ST3101 |
| RHD4CZ7L131ST3301 |  | MH Ring and C.Slab works and Backfilling works for MH 1500 mm - (RD-L-13/1)-Z7-L131-ST | 4d | 2027-01-13 | 2027-01-17 | RHD4PRSHLDOSST1606, RHD4CZ7L131ST3201 |
| RHD4CZ7L131ST3401 |  | Steel Cover for MH 1500 mm - (RD-L-13/1)-Z7-L131-ST | 4d | 2027-01-18 | 2027-01-21 | RHD4PRSHLDOSST1706, RHD4PRSHLSTAGST1706, RHD4CZ7L131ST3301 |
| RHD4CZ7L131ST3501 |  | Finishing, Benching, Testing works for MH 1500 mm - (RD-L-13/1)-Z7-L131-ST | 4d | 2027-01-23 | 2027-01-26 | RHD4CZ7L131ST3401, RHD4CZ7L131ST2500 |
|  | 6008 | **RHD4-02-002-L131-(ST)-GRP Pipes - 600 mm diameter** |  | 2026-12-30 | 2027-01-10 |  |
| RHD4CZ7L131ST1102 |  | Excavation works for GRP Pipe Line 600 mm - (RD-L-13/1)-Z7-L131-ST | 2d | 2026-12-30 | 2026-12-31 | RHD4CZ7L131ST1103 |
| RHD4CZ7L131ST1202 |  | Bedding works for GRP Pipe Line 600 mm - (RD-L-13/1)-Z7-L131-ST | 2d | 2027-01-02 | 2027-01-03 | RHD4CZ7L131ST1102 |
| RHD4CZ7L131ST1302 |  | Installing for GRP Pipe Line 600 mm - (RD-L-13/1)-Z7-L131-ST | 2d | 2027-01-04 | 2027-01-05 | RHD4CZ7L131ST1202 |
| RHD4CZ7L131ST1402 |  | Primary Test for GRP Pipe Line 600 mm - (RD-L-13/1)-Z7-L131-ST | 2d | 2027-01-06 | 2027-01-07 | RHD4CZ7L131ST1302 |
| RHD4CZ7L131ST1502 |  | Backfilling and warning tape works for GRP Pipe Line 600 mm - (RD-L-13/1)-Z7-L131-ST | 2d | 2027-01-09 | 2027-01-10 | RHD4CZ7L131ST1402 |
|  | 6022 | **RHD4-02-002-L131-(ST)-MH Works - 1200 mm diameter** |  | 2027-01-04 | 2027-01-14 |  |
| RHD4CZ7L131ST3100 |  | Excavation and PC Blinding works for MH 1200 mm - (RD-L-13/1)-Z7-L131-ST | 2d | 2027-01-04 | 2027-01-05 | RHD4CZ7L131ST3101 SS |
| RHD4CZ7L131ST3200 |  | Installation of Base for MH 1200 mm - (RD-L-13/1)-Z7-L131-ST | 2d | 2027-01-06 | 2027-01-07 | RHD4CZ7L131ST3100 |
| RHD4CZ7L131ST3300 |  | MH Ring and C.Slab works and Backfilling works for MH 1200 mm - (RD-L-13/1)-Z7-L131-ST | 2d | 2027-01-09 | 2027-01-10 | RHD4CZ7L131ST3200 |
| RHD4CZ7L131ST3400 |  | Steel Cover for MH 1200 mm - (RD-L-13/1)-Z7-L131-ST | 2d | 2027-01-11 | 2027-01-12 | RHD4CZ7L131ST3300 |
| RHD4CZ7L131ST3500 |  | Finishing, Benching, Testing works for MH 1200 mm - (RD-L-13/1)-Z7-L131-ST | 2d | 2027-01-13 | 2027-01-14 | RHD4CZ7L131ST3400, RHD4CZ7L131ST1503 |
|  | 6780 | **RHD4-02-002-L131-(ST)-MH Works - 2000 mm diameter** |  |  |  |  |
|  | 6770 | **RHD4-02-002-L131-(ST)-GRP Pipes - 1200 mm diameter** |  |  |  |  |
|  | 6769 | **RHD4-02-002-L131-(ST)-GRP Pipes - 1100 mm diameter** |  |  |  |  |
|  | 6767 | **RHD4-02-002-L131-(ST)-GRP Pipes - 900 mm diameter** |  | 2026-08-16 | 2026-08-26 |  |
| RHD4CZ7L131ST1105 |  | Excavation works for GRP Pipe Line 900 mm - (RD-L-13/1)-Z7-L131-ST | 2d | 2026-08-16 | 2026-08-17 | RHD4ENSDZ7APPST110, RHD4CZ7L131RW3000, RHD4CZ7L03ST1108 |
| RHD4CZ7L131ST1205 |  | Bedding works for GRP Pipe Line 900 mm - (RD-L-13/1)-Z7-L131-ST | 2d | 2026-08-18 | 2026-08-19 | RHD4CZ7L131ST1105 |
| RHD4CZ7L131ST1305 |  | Installing for GRP Pipe Line 900 mm - (RD-L-13/1)-Z7-L131-ST | 2d | 2026-08-20 | 2026-08-22 | RHD4PRSHLSTAGST1006, RHD4CZ7L131ST1205, RHD4PRSHLDOSST1606, RHD4PRSHLPOST1000, RHD4PRSHLDOSST1006, RHD4PRSHLDOSST1605, RHD4PRSHLDOSST1005 |
| RHD4CZ7L131ST1405 |  | Primary Test for GRP Pipe Line 900 mm - (RD-L-13/1)-Z7-L131-ST | 2d | 2026-08-23 | 2026-08-24 | RHD4CZ7L131ST1305 |

| ID | WBS | Task | Duration | Start | Finish | Predecessors |
| --- | --- | --- | --- | --- | --- | --- |
| RHD4CZ7L131ST1505 |  | Backfilling and warning tape works for GRP Pipe Line 900 mm - (RD-L-13/1)-Z7-L131-ST | 2d | 2026-08-25 | 2026-08-26 | RHD4CZ7L131ST1405 |
|  | 6766 | **RHD4-02-002-L131-(ST)-GRP Pipes - 800 mm diameter** |  | 2026-12-24 | 2027-01-07 |  |
| RHD4CZ7L131ST1104 |  | Excavation works for GRP Pipe Line 800 mm - (RD-L-13/1)-Z7-L131-ST | 3d | 2026-12-24 | 2026-12-27 | RHD4ENSDZ7APPST110, RHD4CZ7L03ST1507 |
| RHD4CZ7L131ST1204 |  | Bedding works for GRP Pipe Line 800 mm - (RD-L-13/1)-Z7-L131-ST | 3d | 2026-12-28 | 2026-12-30 | RHD4CZ7L131ST1104 |
| RHD4CZ7L131ST1304 |  | Installing for GRP Pipe Line 800 mm - (RD-L-13/1)-Z7-L131-ST | 2d | 2026-12-31 | 2027-01-02 | RHD4PRSHLSTAGST1006, RHD4CZ7L131ST1204, RHD4CZ7L131ST1305, RHD4PRSHLDOSST1606, RHD4PRSHLPOST1000, RHD4PRSHLDOSST1006, RHD4PRSHLDOSST1605, RHD4PRSHLDOSST1005 |
| RHD4CZ7L131ST1404 |  | Primary Test for GRP Pipe Line 800 mm - (RD-L-13/1)-Z7-L131-ST | 2d | 2027-01-03 | 2027-01-04 | RHD4CZ7L131ST1304 |
| RHD4CZ7L131ST1504 |  | Backfilling and warning tape works for GRP Pipe Line 800 mm - (RD-L-13/1)-Z7-L131-ST | 3d | 2027-01-05 | 2027-01-07 | RHD4CZ7L131ST1404, RHD4CZ7L131ST1505 |
|  | 6765 | **RHD4-02-002-L131-(ST)-GRP Pipes - 700 mm diameter** |  | 2026-12-28 | 2027-01-12 |  |
| RHD4CZ7L131ST1103 |  | Excavation works for GRP Pipe Line 700 mm - (RD-L-13/1)-Z7-L131-ST | 2d | 2026-12-28 | 2026-12-29 | RHD4ENSDZ7APPST110, RHD4CZ7L131ST1104 |
| RHD4CZ7L131ST1203 |  | Bedding works for GRP Pipe Line 700 mm - (RD-L-13/1)-Z7-L131-ST | 2d | 2026-12-30 | 2026-12-31 | RHD4CZ7L131ST1103 |
| RHD4CZ7L131ST1303 |  | Installing for GRP Pipe Line 700 mm - (RD-L-13/1)-Z7-L131-ST | 2d | 2027-01-03 | 2027-01-04 | RHD4PRSHLSTAGST1006, RHD4CZ7L131ST1203, RHD4CZ7L131ST1304, RHD4PRSHLDOSST1606, RHD4PRSHLPOST1000, RHD4PRSHLDOSST1006, RHD4PRSHLDOSST1605, RHD4PRSHLDOSST1005 |
| RHD4CZ7L131ST1403 |  | Primary Test for GRP Pipe Line 700 mm - (RD-L-13/1)-Z7-L131-ST | 2d | 2027-01-05 | 2027-01-06 | RHD4CZ7L131ST1303 |
| RHD4CZ7L131ST1503 |  | Backfilling and warning tape works for GRP Pipe Line 700 mm - (RD-L-13/1)-Z7-L131-ST | 2d | 2027-01-11 | 2027-01-12 | RHD4CZ7L131ST1403, RHD4CZ7L131ST1504, RHD4CZ7L131ST1502 |
|  | 6777 | **RHD4-02-002-L131-(ST)-UPVC Pipes - 400 mm diameter** |  |  |  |  |
|  | 6776 | **RHD4-02-002-L131-(ST)-UPVC Pipes - 300 mm diameter** |  | 2027-01-02 | 2027-01-17 |  |
| RHD4CZ7L131ST2100 |  | Excavation works for UPVC Pipe Line 300 mm - (RD-L-13/1)-Z7-L131-ST | 2d | 2027-01-02 | 2027-01-03 | RHD4ENSDZ7APPST110, RHD4CZ7L131ST1102 |
| RHD4CZ7L131ST2200 |  | Bedding works for UPVC Pipe Line 300 mm - (RD-L-13/1)-Z7-L131-ST | 2d | 2027-01-04 | 2027-01-05 | RHD4CZ7L131ST2100 |
| RHD4CZ7L131ST2300 |  | Installing for UPVC Pipe Line 300 mm - (RD-L-13/1)-Z7-L131-ST | 2d | 2027-01-11 | 2027-01-12 | RHD4PRSHLDOSST1106, RHD4PRSHLSTAGST1106, RHD4CZ7L131ST2200, RHD4CZ7L131ST7300 |
| RHD4CZ7L131ST2400 |  | Primary Test for UPVC Pipe Line 300 mm - (RD-L-13/1)-Z7-L131-ST | 2d | 2027-01-13 | 2027-01-14 | RHD4CZ7L131ST2300 |
| RHD4CZ7L131ST2500 |  | Backfilling and warning tape works for UPVC Pipe Line 300 mm - (RD-L-13/1)-Z7-L131-ST | 2d | 2027-01-16 | 2027-01-17 | RHD4CZ7L131ST2400, RHD4CZ7L131ST6100 |
|  | 6783 | **RHD4-02-002-L131-(ST)-HDPE Force Main Pipeline - 250 mm diameter** |  |  |  |  |
|  | 6781 | **RHD4-02-002-L131-(ST)-Discharge Chamber - 1500*1200 mm** |  |  |  |  |
|  | 6784 | **RHD4-02-002-L131-(ST)-Concrete Encasement** |  | 2027-01-11 | 2027-01-12 |  |
| RHD4CZ7L131ST6100 |  | Pipe Encasement for Storm Pipelines - (RD-L-13/1)-Z7-L131-ST | 2d | 2027-01-11 | 2027-01-12 | RHD4CZ7L131ST2300 SS, RHD4CZ7L131ST2300 FF, RHD4CZ7L131ST2200 |
|  | 6785 | **RHD4-02-002-Z7-L131-Catch Basin - ST** |  | 2027-01-04 | 2027-01-16 |  |
|  | 6786 | **RHD4-02-002-L131-(ST)-Single Catch Basin Works** |  | 2027-01-04 | 2027-01-16 |  |
| RHD4CZ7L131ST7100 |  | Excavation works for Single Catch Basin - (RD-L-13/1)-Z7-L131-ST | 2d | 2027-01-04 | 2027-01-05 | RHD4ENSDZ7APPST110, RHD4CZ7L131ST2100 |
| RHD4CZ7L131ST7200 |  | PC Blinding, Installation and Pipe connection for Single Catch Basin - (RD-L-13/1)-Z7-L131-ST | 2d | 2027-01-06 | 2027-01-07 | RHD4CZ7L131ST7100 |
| RHD4CZ7L131ST7300 |  | Rings & C.Slab & Final Backfill for Single Catch Basin - (RD-L-13/1)-Z7-L131-ST | 2d | 2027-01-09 | 2027-01-10 | RHD4PRSHLDOSST1306, RHD4PRSHLSTAGST1306, RHD4CZ7L131ST7200 |
| RHD4CZ7L131ST7400 |  | Steel Cover for Single Catch Basin - (RD-L-13/1)-Z7-L131-ST | 2d | 2027-01-11 | 2027-01-12 | RHD4PRSHLDOSST1706, RHD4CZ7L131ST7300 |
| RHD4CZ7L131ST7500 |  | Finishing and Insulation works for Single Catch Basin - (RD-L-13/1)-Z7-L131-ST | 3d | 2027-01-13 | 2027-01-16 | RHD4CZ7L131ST7400 |
|  | 6787 | **RHD4-02-002-L131-(ST)-Double Catch Basin Works** |  |  |  |  |
|  | 6810 | **RHD4-02-002-Z7-L131-Sewage Network - SW** |  | 2027-01-17 | 2027-03-04 |  |
|  | 6822 | **RHD4-02-002-L131-(SW)-MH Works - 1500 mm diameter** |  |  |  |  |
|  | 6442 | **RHD4-02-002-L131-(SW)-MH Works - 1200 mm diameter** |  | 2027-01-17 | 2027-02-23 |  |
| RHD4CZ7L131SW3100 |  | Excavation and PC Blinding works for MH 1200 mm - (RD-L-13/1)-Z7-L131-SW | 6d | 2027-01-17 | 2027-01-23 | RHD4CZ7L131SW1101 SS |
| RHD4CZ7L131SW3200 |  | Installation of Base for MH 1200 mm - (RD-L-13/1)-Z7-L131-SW | 11d | 2027-01-24 | 2027-02-04 | RHD4CZ7L131SW3100 |
| RHD4CZ7L131SW3300 |  | MH Ring and C.Slab works and Backfilling works for MH 1200 mm - (RD-L-13/1)-Z7-L131-SW | 5d | 2027-02-06 | 2027-02-10 | RHD4CZ7L131SW3200 |
| RHD4CZ7L131SW3400 |  | Steel Cover for MH 1200 mm - (RD-L-13/1)-Z7-L131-SW | 4d | 2027-02-11 | 2027-02-15 | RHD4CZ7L131SW3300 |
| RHD4CZ7L131SW3500 |  | Finishing, Benching, Testing works for MH 1200 mm - (RD-L-13/1)-Z7-L131-SW | 6d | 2027-02-16 | 2027-02-23 | RHD4CZ7L131SW3400, RHD4CZ7L131SW2500 |
|  | 957 | **RHD4-02-002-L131-(SW)-MH Works - 1200 mm diameter with Back drop** |  | 2027-01-24 | 2027-02-03 |  |
| RHD4CZ7L131SW3101 |  | Excavation and PC Blinding works for MH 1200 mm - (RD-L-13/1)-Z7-L131-SW | 2d | 2027-01-24 | 2027-01-25 | RHD4CZ7L131SW3100 |
| RHD4CZ7L131SW3201 |  | Installation of Base for MH 1200 mm - (RD-L-13/1)-Z7-L131-SW | 2d | 2027-01-26 | 2027-01-27 | RHD4CZ7L131SW3101 |
| RHD4CZ7L131SW3301 |  | MH Ring and C.Slab works and Backfilling works for MH 1200 mm - (RD-L-13/1)-Z7-L131-SW | 2d | 2027-01-28 | 2027-01-30 | RHD4CZ7L131SW3201 |
| RHD4CZ7L131SW3401 |  | Steel Cover for MH 1200 mm - (RD-L-13/1)-Z7-L131-SW | 2d | 2027-01-31 | 2027-02-01 | RHD4CZ7L131SW3301 |
| RHD4CZ7L131SW3501 |  | Finishing, Benching, Testing works for MH 1200 mm - (RD-L-13/1)-Z7-L131-SW | 2d | 2027-02-02 | 2027-02-03 | RHD4CZ7L131SW3401 |
|  | 6434 | **RHD4-02-002-L131-(SW)-GRP Pipes - 400 mm diameter** |  | 2027-01-17 | 2027-03-04 |  |
| RHD4CZ7L131SW1101 |  | Excavation works for GRP Pipe Line 400 mm - (RD-L-13/1)-Z7-L131-SW | 4d | 2027-01-17 | 2027-01-20 | RHD4CZ7L131ST7500 |
| RHD4CZ7L131SW1201 |  | Bedding works for GRP Pipe Line 400 mm - (RD-L-13/1)-Z7-L131-SW | 4d | 2027-01-21 | 2027-01-25 | RHD4CZ7L131SW1101 |
| RHD4CZ7L131SW1301 |  | Installing for GRP Pipe Line 400 mm - (RD-L-13/1)-Z7-L131-SW | 4d | 2027-02-11 | 2027-02-15 | RHD4CZ7L131SW1201, RHD4CZ7L131SW3300 |
| RHD4CZ7L131SW1401 |  | Primary Test for GRP Pipe Line 400 mm - (RD-L-13/1)-Z7-L131-SW | 4d | 2027-02-16 | 2027-02-20 | RHD4CZ7L131SW1301 |
| RHD4CZ7L131SW1501 |  | Backfilling and warning tape works for GRP Pipe Line 400 mm - (RD-L-13/1)-Z7-L131-SW | 4d | 2027-03-01 | 2027-03-04 | RHD4CZ7L131SW1401, RHD4CZ7L131SW2500, RHD4CZ7L131IRR3202 |
|  | 6438 | **RHD4-02-002-L131-(SW)-UPVC Pipes - 200 mm diameter** |  | 2027-01-21 | 2027-02-01 |  |
| RHD4CZ7L131SW2100 |  | Excavation works for UPVC Pipe Line 200 mm - (RD-L-13/1)-Z7-L131-SW | 2d | 2027-01-21 | 2027-01-23 | RHD4CZ7L131SW1101 |
| RHD4CZ7L131SW2200 |  | Bedding works for UPVC Pipe Line 200 mm - (RD-L-13/1)-Z7-L131-SW | 2d | 2027-01-24 | 2027-01-25 | RHD4CZ7L131SW2100 |
| RHD4CZ7L131SW2300 |  | Installing for UPVC Pipe Line 200 mm - (RD-L-13/1)-Z7-L131-SW | 2d | 2027-01-26 | 2027-01-27 | RHD4CZ7L131SW2200 |
| RHD4CZ7L131SW2400 |  | Primary Test for UPVC Pipe Line 200 mm - (RD-L-13/1)-Z7-L131-SW | 2d | 2027-01-28 | 2027-01-30 | RHD4CZ7L131SW2300 |
| RHD4CZ7L131SW2500 |  | Backfilling and warning tape works for UPVC Pipe Line 200 mm - (RD-L-13/1)-Z7-L131-SW | 2d | 2027-01-31 | 2027-02-01 | RHD4CZ7L131SW2400 |
|  | 6823 | **RHD4-02-002-L131-(SW)-MH Works - 1500 mm diameter with Back drop** |  |  |  |  |
|  | 6815 | **RHD4-02-002-L131-(SW)-GRP Pipes - 700 mm diameter** |  |  |  |  |
|  | 6819 | **RHD4-02-002-L131-(SW)-Concrete Encasement** |  |  |  |  |
|  | 6847 | **RHD4-02-002-Z7-L131-Potable Network - PT** |  | 2027-02-04 | 2027-03-31 |  |
|  | 6848 | **RHD4-02-002-L131-(PT)-HDPE Pipes - 110 mm diameter** |  | 2027-02-08 | 2027-03-13 |  |
| RHD4CZ7L131PT1100 |  | Excavation works for HDPE Pipline 110 mm - (RD-L-13/1)-Z7-L131-PT | 2d | 2027-02-08 | 2027-02-09 | RHD4ENSDZ7APPPT130, RHD4ENMSPT2000, RHD4CZ7L131PT1101 |
| RHD4CZ7L131PT1200 |  | Bedding works for HDPE Pipline 110 mm - (RD-L-13/1)-Z7-L131-PT | 2d | 2027-02-11 | 2027-02-13 | RHD4CZ7L131PT1100, RHD4CZ7L131PT1201 |
| RHD4CZ7L131PT1300 |  | Installing for HDPE Pipline 110 mm - (RD-L-13/1)-Z7-L131-PT | 2d | 2027-02-17 | 2027-02-18 | RHD4PRSHLDOSPT1000, RHD4PRSHLSTAGPT1000, RHD4CZ7L131PT1200, RHD4CZ7L131PT1301 |
| RHD4CZ7L131PT1400 |  | Primary Test for HDPE Pipline 110 mm - (RD-L-13/1)-Z7-L131-PT | 2d | 2027-03-03 | 2027-03-04 | RHD4CZ7L131PT1300, RHD4CZ7L131PT1401, RHD4CZ7L131PT5100 |
| RHD4CZ7L131PT1500 |  | Backfilling and warning tape works for HDPE Pipline 110 mm - (RD-L-13/1)-Z7-L131-PT | 2d | 2027-03-08 | 2027-03-13 | RHD4CZ7L131PT1400, RHD4CZ7L131PT1501 |
|  | 6849 | **RHD4-02-002-L131-(PT)-HDPE Pipes - 160 mm diameter** |  | 2027-02-04 | 2027-03-07 |  |
| RHD4CZ7L131PT1101 |  | Excavation works for HDPE Pipline 160 mm - (RD-L-13/1)-Z7-L131-PT | 3d | 2027-02-04 | 2027-02-07 | RHD4ENSDZ7APPPT130, RHD4ENMSPT2000, RHD4CZ7L131SW3501 |

| ID | WBS | Task | Duration | Start | Finish | Predecessors |
| --- | --- | --- | --- | --- | --- | --- |
| RHD4CZ7L131PT1201 |  | Bedding works for HDPE Pipline 160 mm - (RD-L-13/1)-Z7-L131-PT | 3d | 2027-02-08 | 2027-02-10 | RHD4CZ7L131PT1101 |
| RHD4CZ7L131PT1301 |  | Installing for HDPE Pipline 160 mm - (RD-L-13/1)-Z7-L131-PT | 5d | 2027-02-11 | 2027-02-16 | RHD4PRSHLDOSPT1000, RHD4PRSHLSTAGPT1000, RHD4CZ7L131PT1201 |
| RHD4CZ7L131PT1401 |  | Primary Test for HDPE Pipline 160 mm - (RD-L-13/1)-Z7-L131-PT | 2d | 2027-03-01 | 2027-03-02 | RHD4CZ7L131PT1301, RHD4CZ7L131PT5100 |
| RHD4CZ7L131PT1501 |  | Backfilling and warning tape works for HDPE Pipline 160 mm - (RD-L-13/1)-Z7-L131-PT | 4d | 2027-03-03 | 2027-03-07 | RHD4CZ7L131PT1401 |
|  | 6853 | **RHD4-02-002-L131-(PT)-Gate Valves (Direct Buried)** |  | 2027-02-17 | 2027-03-15 |  |
| RHD4CZ7L131PT3100 |  | Installation for Direct Buried Gate Valves - (RD-L-13/1)-Z7-L131-PT | 2d | 2027-02-17 | 2027-02-18 | RHD4PRSHLDOSPT1200, RHD4PRSHLSTAGPT1200, RHD4CZ7L131PT1301 FF, RHD4CZ7L131PT1300 FF, RHD4CZ7L131PT1301 SS, RHD4CZ7L131PT1300 SS |
| RHD4CZ7L131PT3200 |  | Stem and Service box for Direct Buried Gate Valves - (RD-L-13/1)-Z7-L131-PT | 2d | 2027-03-14 | 2027-03-15 | RHD4PRSHLDOSPT1300, RHD4PRSHLSTAGPT1300, RHD4CZ7L131PT3100, RHD4CZ7L131PT1501, RHD4CZ7L131PT1500 |
|  | 6856 | **RHD4-02-002-L131-(PT)-Wash out Valve Chambers** |  |  |  |  |
|  | 6857 | **RHD4-02-002-L131-(PT)-Wash out Valves** |  |  |  |  |
|  | 6858 | **RHD4-02-002-L131-(PT)-Air Valve Chambers** |  | 2027-02-10 | 2027-02-18 |  |
| RHD4CZ7L131PT2102 |  | Excavation and Bedding for Air Valve Chambers for Potable Water Network - (RD-L-13/1)-Z7-L131-PT | 2d | 2027-02-10 | 2027-02-11 | RHD4ENSDZ7APPPT130, RHD4CZ7L131PT1100 |
| RHD4CZ7L131PT2202 |  | PC works for Air Valve Chambers for Potable Water Network - (RD-L-13/1)-Z7-L131-PT | 2d | 2027-02-13 | 2027-02-14 | RHD4CZ7L131PT2102 |
| RHD4CZ7L131PT2302 |  | Installation for Air Valve Chambers for Potable Water Network - (RD-L-13/1)-Z7-L131-PT | 2d | 2027-02-15 | 2027-02-16 | RHD4PRSHLDOSPT1100, RHD4PRSHLDOSPT1400, RHD4PRSHLSTAGPT1100, RHD4PRSHLSTAGPT1400, RHD4CZ7L131PT2202 |
| RHD4CZ7L131PT2402 |  | Backfilling works for Air Valve Chambers for Potable Water Network - (RD-L-13/1)-Z7-L131-PT | 2d | 2027-02-17 | 2027-02-18 | RHD4CZ7L131PT2302 |
|  | 6859 | **RHD4-02-002-L131-(PT)-Air Valves** |  | 2027-02-17 | 2027-02-21 |  |
| RHD4CZ7L131PT3103 |  | Installation for Air Valves for Potable Water Network - (RD-L-13/1)-Z7-L131-PT | 2d | 2027-02-17 | 2027-02-18 | RHD4PRSHLDOSPT1200, RHD4PRSHLSTAGPT1200, RHD4CZ7L131PT2302 |
| RHD4CZ7L131PT3203 |  | Stem and Service box for Air Valves for Potable Water Network - (RD-L-13/1)-Z7-L131-PT | 2d | 2027-02-20 | 2027-02-21 | RHD4PRSHLDOSPT1300, RHD4PRSHLSTAGPT1300, RHD4CZ7L131PT3103, RHD4CZ7L131PT2402 |
|  | 6860 | **RHD4-02-002-L131-(PT)-Fire Hydrant** |  | 2027-03-14 | 2027-03-31 |  |
| RHD4CZ7L131PT4100 |  | Excavation and Bedding and Pipe Installation for Fire Hydrant - (RD-L-13/1)-Z7-L131-PT | 5d | 2027-03-14 | 2027-03-18 | RHD4ENSDZ7APPPT130, RHD4CZ7L131PT1501, RHD4CZ7L131PT1500 |
| RHD4CZ7L131PT4200 |  | Valve Installation for Fire Hydrant - (RD-L-13/1)-Z7-L131-PT | 3d | 2027-03-20 | 2027-03-22 | RHD4CZ7L131PT4100 |
| RHD4CZ7L131PT4300 |  | Stem for Fire Hydrant - (RD-L-13/1)-Z7-L131-PT | 3d | 2027-03-23 | 2027-03-25 | RHD4CZ7L131PT4200 |
| RHD4CZ7L131PT4400 |  | Fire Installation for Fire Hydrant - (RD-L-13/1)-Z7-L131-PT | 3d | 2027-03-27 | 2027-03-29 | RHD4PRSHLDOSPT1500, RHD4PRSHLSTAGPT1500, RHD4CZ7L131PT4300 |
| RHD4CZ7L131PT4500 |  | Protection Barriers for Fire Hydrant - (RD-L-13/1)-Z7-L131-PT | 2d | 2027-03-30 | 2027-03-31 | RHD4CZ7L131PT4400, RHD4CZ7L131PT3200 |
|  | 6861 | **RHD4-02-002-L131-(PT)-Concrete Encasement** |  | 2027-02-17 | 2027-02-28 |  |
| RHD4CZ7L131PT5100 |  | Pipe Encasement for Potable Pipelines - (RD-L-13/1)-Z7-L131-PT | 9d | 2027-02-17 | 2027-02-28 | RHD4CZ7L131PT1301 FF, RHD4CZ7L131PT1300 FF, RHD4CZ7L131PT1301 SS, RHD4CZ7L131PT1300 SS, RHD4CZ7L131PT1201, RHD4CZ7L131PT1200 |
|  | 6862 | **RHD4-02-002-Z7-L131-Irrigation Network - IRR** |  | 2027-02-10 | 2027-04-05 |  |
|  | 6863 | **RHD4-02-002-L131-(IRR)-HDPE Pipes - 160 mm diameter** |  | 2027-02-10 | 2027-03-06 |  |
| RHD4CZ7L131IRR1100 |  | Excavation works for HDPE Pipline 160 mm - (RD-L-13/1)-Z7-L131-IRR | 5d | 2027-02-10 | 2027-02-15 | RHD4ENSDZ7APPIRR140, RHD4ENMSRR2000, RHD4CZ7L131PT1101, RHD4CZ7L131PT1100, RHD4CZ7L131MV3401 |
| RHD4CZ7L131IRR1200 |  | Bedding works for HDPE Pipline 160 mm - (RD-L-13/1)-Z7-L131-IRR | 4d | 2027-02-16 | 2027-02-20 | RHD4CZ7L131IRR1100 |
| RHD4CZ7L131IRR1300 |  | Installing for HDPE Pipline 160 mm - (RD-L-13/1)-Z7-L131-IRR | 5d | 2027-02-21 | 2027-02-27 | RHD4PRSHLDOSIRR1000, RHD4PRSHLSTAGIRR1000, RHD4CZ7L131IRR1200 |
| RHD4CZ7L131IRR1400 |  | Primary Test for HDPE Pipline 160 mm - (RD-L-13/1)-Z7-L131-IRR | 2d | 2027-02-28 | 2027-03-01 | RHD4CZ7L131IRR1300 |
| RHD4CZ7L131IRR1500 |  | Backfilling and warning tape works for HDPE Pipline 160 mm - (RD-L-13/1)-Z7-L131-IRR | 4d | 2027-03-02 | 2027-03-06 | RHD4CZ7L131IRR1400 |
|  | 6685 | **RHD4-02-002-L131-(IRR)-Wash out Chamber** |  | 2027-02-16 | 2027-02-25 |  |
| RHD4CZ7L131IRR2101 |  | Excavation and Bedding for Wash out Chamber for Irrigation Network - (RD-L-13/1)-Z7-L131-IRR | 2d | 2027-02-16 | 2027-02-17 | RHD4CZ7L131IRR2102 SS |
| RHD4CZ7L131IRR2201 |  | PC works for Wash out Chamber for Irrigation Network - (RD-L-13/1)-Z7-L131-IRR | 2d | 2027-02-18 | 2027-02-20 | RHD4CZ7L131IRR2101 |
| RHD4CZ7L131IRR2301 |  | Installation for Wash out Chamber for Irrigation Network - (RD-L-13/1)-Z7-L131-IRR | 2d | 2027-02-21 | 2027-02-23 | RHD4CZ7L131IRR2201 |
| RHD4CZ7L131IRR2401 |  | Backfilling works for Wash out Chamber for Irrigation Network - (RD-L-13/1)-Z7-L131-IRR | 2d | 2027-02-24 | 2027-02-25 | RHD4CZ7L131IRR2301 |
|  | 6864 | **RHD4-02-002-L131-(IRR)-HDPE Pipes - 180 mm diameter** |  |  |  |  |
|  | 6871 | **RHD4-02-002-L131-(IRR)-Gate Valves (Direct Buried)** |  | 2027-04-01 | 2027-04-05 |  |
| RHD4CZ7L131IRR3100 |  | Installation for Direct Buried Gate Valves - (RD-L-13/1)-Z7-L131-IRR | 2d | 2027-04-01 | 2027-04-03 | RHD4PRSHLDOSIRR1100, RHD4PRSHLSTAGIRR1100, RHD4CZ7L131IRR1300 SS, RHD4CZ7L131IRR1300 FF, RHD4CZ7L131PT4500, RHD4CZ7L131PT3203 |
| RHD4CZ7L131IRR3200 |  | Stem and Service box for Direct Buried Gate Valves - (RD-L-13/1)-Z7-L131-IRR | 2d | 2027-04-04 | 2027-04-05 | RHD4PRSHLDOSIRR1300, RHD4PRSHLSTAGIRR1300, RHD4CZ7L131IRR3100, RHD4CZ7L131IRR1500 |
|  | 6876 | **RHD4-02-002-L131-(IRR)-Air Valve Chamber** |  | 2027-02-16 | 2027-02-25 |  |
| RHD4CZ7L131IRR2102 |  | Excavation and Bedding for Valve Chamber for Irrigation Network - (RD-L-13/1)-Z7-L131-IRR | 2d | 2027-02-16 | 2027-02-17 | RHD4ENSDZ7APPIRR140, RHD4CZ7L131IRR1100 |
| RHD4CZ7L131IRR2202 |  | PC works for Valve Chamber for Irrigation Network - (RD-L-13/1)-Z7-L131-IRR | 2d | 2027-02-18 | 2027-02-20 | RHD4CZ7L131IRR2102 |
| RHD4CZ7L131IRR2302 |  | Installation for Valve Chamber for Irrigation Network - (RD-L-13/1)-Z7-L131-IRR | 2d | 2027-02-21 | 2027-02-23 | RHD4PRSHLDOSIRR1200, RHD4PRSHLDOSIRR1400, RHD4PRSHLSTAGIRR1200, RHD4PRSHLSTAGIRR1400, RHD4CZ7L131IRR2202 |
| RHD4CZ7L131IRR2402 |  | Backfilling works for Valve Chamber for Irrigation Network - (RD-L-13/1)-Z7-L131-IRR | 2d | 2027-02-24 | 2027-02-25 | RHD4CZ7L131IRR2302 |
|  | 6877 | **RHD4-02-002-L131-(IRR)-Air Valves** |  | 2027-02-24 | 2027-02-28 |  |
| RHD4CZ7L131IRR3103 |  | Installation for Air Valves for Irrigation Network - (RD-L-13/1)-Z7-L131-IRR | 2d | 2027-02-24 | 2027-02-25 | RHD4PRSHLDOSIRR1100, RHD4PRSHLSTAGIRR1100, RHD4CZ7L131IRR2302 |
| RHD4CZ7L131IRR3203 |  | Stem and Service box for Air Valves for Irrigation Network - (RD-L-13/1)-Z7-L131-IRR | 2d | 2027-02-27 | 2027-02-28 | RHD4PRSHLDOSIRR1300, RHD4PRSHLSTAGIRR1300, RHD4CZ7L131IRR3103, RHD4CZ7L131IRR2402 |
|  | 6686 | **RHD4-02-002-L131-(IRR)-Wash out Valves** |  | 2027-02-24 | 2027-02-28 |  |
| RHD4CZ7L131IRR3102 |  | Installation for Wash out Valve for Irrigation Network - (RD-L-13/1)-Z7-L131-IRR | 2d | 2027-02-24 | 2027-02-25 | RHD4CZ7L131IRR2301 |
| RHD4CZ7L131IRR3202 |  | Stem and Service box for Wash out Valve for Irrigation Network - (RD-L-13/1)-Z7-L131-IRR | 2d | 2027-02-27 | 2027-02-28 | RHD4CZ7L131IRR3102, RHD4CZ7L131IRR2401, RHD4CZ7L131ST3500 |
|  | 6896 | **RHD4-02-002-Z7-L131-Medium Voltage Network - MV** |  | 2026-12-31 | 2027-03-28 |  |
|  | 6897 | **RHD4-02-002-L131-(MV)-Medium Voltage cable trench** |  | 2026-12-31 | 2027-03-28 |  |
| RHD4CZ7L131MV1100 |  | Excavation for Medium Voltage Trench - (RD-L-13/1)-Z7-L131-MV | 5d | 2026-12-31 | 2027-01-05 | RHD4ENSDZ7APPMV150, RHD4CZ7L131ST1204 |
| RHD4CZ7L131MV1200 |  | Trench Backfilling for Medium Voltage Network - (RD-L-13/1)-Z7-L131-MV | 5d | 2027-03-23 | 2027-03-28 | RHD4CZ7L131MV3200, RHD4CZ7L03MV1200 |
|  | 6898 | **RHD4-02-002-L131-(MV)-Medium Voltage duct banks** |  |  |  |  |
|  | 6899 | **RHD4-02-002-L131-(MV)-Medium Voltage cables 3Cx 500 mm²** |  | 2027-01-06 | 2027-01-17 |  |
| RHD4CZ7L131MV3100 |  | Installation of Medium Voltage Cables 3Cx 500 mm² - (RD-L-13/1)-Z7-L131-MV | 3d | 2027-01-06 | 2027-01-09 | RHD4PRSHLDOSMV1100, RHD4ENMSMV2000, RHD4ENMSMV2010, RHD4PRSHLSTAGMV1100, RHD4CZ7L131MV1100 |
| RHD4CZ7L131MV3200 |  | Joints Installation of Medium Voltage Cables 3Cx 500 mm² - (RD-L-13/1)-Z7-L131-MV | 2d | 2027-01-10 | 2027-01-11 | RHD4PRSHLDOSMV1300, RHD4PRSHLSTAGMV1300, RHD4CZ7L131MV3100 |
| RHD4CZ7L131MV3300 |  | Testing of Medium Voltage Cables 3Cx 500 mm² - (RD-L-13/1)-Z7-L131-MV | 3d | 2027-01-12 | 2027-01-14 | RHD4CZ7L131MV3200 |
| RHD4CZ7L131MV3400 |  | Termination of Medium Voltage Cables 3Cx 500 mm² - (RD-L-13/1)-Z7-L131-MV | 2d | 2027-01-16 | 2027-01-17 | RHD4CZ7L131MV3300 |
|  | 6900 | **RHD4-02-002-L131-(MV)-Medium Voltage cables 3Cx 50 mm²** |  | 2027-01-16 | 2027-01-17 |  |
| RHD4CZ7L131MV3401 |  | Termination of Medium Voltage Cables 3Cx 50 mm² - (RD-L-13/1)-Z7-L131-MV | 2d | 2027-01-16 | 2027-01-17 | RHD4CZ7L131MV3400 SS, RHD4CZ7L131MV3300 |
|  | 6901 | **RHD4-02-002-L131-(MV)-Normally open Point (Outdoor Type)** |  |  |  |  |
|  | 6903 | **RHD4-02-002-Z7-L131-Low Voltage Network - LV** |  | 2027-04-06 | 2027-04-26 |  |
|  | 6904 | **RHD4-02-002-L131-(LV)-Low Voltage duct banks** |  | 2027-04-06 | 2027-04-14 |  |
| RHD4CZ7L131LV2100 |  | Excavation of Duct Banks for Low Voltage Network - (RD-L-13/1)-Z7-L131-LV | 2d | 2027-04-06 | 2027-04-07 | RHD4ENSDZ7APPLV160, RHD4CZ7L131PT4500, RHD4CZ7L131IRR3200, RHD4CZ7L131MV1200, RHD4CZ7L131MV3401 |
| RHD4CZ7L131LV2200 |  | Installation of Duct Banks for Low Voltage Network - (RD-L-13/1)-Z7-L131-LV | 2d | 2027-04-08 | 2027-04-10 | RHD4PRSHLDOSLV1000, RHD4PRSHLSTAGLV1000, RHD4CZ7L131LV2100 |
| RHD4CZ7L131LV2300 |  | Pouring of Duct Banks for Low Voltage Network - (RD-L-13/1)-Z7-L131-LV | 2d | 2027-04-11 | 2027-04-12 | RHD4CZ7L131LV2200 |

| ID | WBS | Task | Duration | Start | Finish | Predecessors |
| --- | --- | --- | --- | --- | --- | --- |
| RHD4CZ7L131LV2400 |  | Backfilling of Duct Banks for Low Voltage Network - (RD-L-13/1)-Z7-L131-LV | 2d | 2027-04-13 | 2027-04-14 | RHD4CZ7L131LV2300 |
|  | 6905 | **RHD4-02-002-L131-(LV)-Low Voltage Drawpit** |  | 2027-04-13 | 2027-04-17 |  |
| RHD4CZ7L131LV5100 |  | Excavation of Drawpit size 900x900x1000mm for Low Voltage Network - (RD-L-13/1)-Z7-L131-LV | 2d | 2027-04-13 | 2027-04-14 | RHD4ENSDZ7APPLV160, RHD4CZ7L131LV2300, RHD4CZ7L131MV3401 |
| RHD4CZ7L131LV5200 |  | Installation of Drawpit size 900x900x1000mm for Low Voltage Network - (RD-L-13/1)-Z7-L131-LV | 2d | 2027-04-15 | 2027-04-17 | RHD4PRSHLDOSLV1400, RHD4PRSHLSTAGLV1400, RHD4CZ7L131LV5100 |
|  | 6906 | **RHD4-02-002-L131-(LV)-Low Voltage cables** |  | 2027-04-18 | 2027-04-26 |  |
| RHD4CZ7L131LV3100 |  | Excavation for Low Voltage Cables for Low Voltage Network - (RD-L-13/1)-Z7-L131-LV | 2d | 2027-04-18 | 2027-04-19 | RHD4ENSDZ7APPLV160, RHD4CZ7L131LV2400, RHD4CZ7L131LV5200 |
| RHD4CZ7L131LV3200 |  | Cable Laying of Low Voltage Cables for Low Voltage Network - (RD-L-13/1)-Z7-L131-LV | 2d | 2027-04-20 | 2027-04-21 | RHD4PRSHLDOSLV1100, RHD4ENMSLV2000, RHD4ENMSLV2010, RHD4PRSHLSTAGLV1100, RHD4CZ7L131LV3100 |
| RHD4CZ7L131LV3300 |  | Warning tape and Backfill for Low Voltage Cables for Low Voltage Network - (RD-L-13/1)-Z7-L131-LV | 2d | 2027-04-22 | 2027-04-24 | RHD4CZ7L131LV3200 |
| RHD4CZ7L131LV3400 |  | Testing of Low Voltage Cables for Low Voltage Network - (RD-L-13/1)-Z7-L131-LV | 2d | 2027-04-25 | 2027-04-26 | RHD4CZ7L131LV3300 |
|  | 6909 | **RHD4-02-002-Z7-L131-Street Lighting Network - SL** |  | 2027-04-08 | 2027-06-16 |  |
|  | 6910 | **RHD4-02-002-L131-(SL)-Street Lighting duct banks** |  | 2027-04-08 | 2027-04-17 |  |
| RHD4CZ7L131SL2100 |  | Excavation of Duct Banks for Street Lighting Network - (RD-L-13/1)-Z7-L131-SL | 2d | 2027-04-08 | 2027-04-10 | RHD4ENSDZ7APPSL170, RHD4CZ7L131LV2100 |
| RHD4CZ7L131SL2200 |  | Installation of Duct Banks for Street Lighting Network - (RD-L-13/1)-Z7-L131-SL | 2d | 2027-04-11 | 2027-04-12 | RHD4PRSHLDOSSL1000, RHD4PRSHLSTAGSL1000, RHD4CZ7L131SL2100, RHD4CZ7L131LV2200 |
| RHD4CZ7L131SL2300 |  | Pouring of Duct Banks for Street Lighting Network - (RD-L-13/1)-Z7-L131-SL | 2d | 2027-04-13 | 2027-04-14 | RHD4CZ7L131SL2200, RHD4CZ7L131LV2300 |
| RHD4CZ7L131SL2400 |  | Backfilling of Duct Banks for Street Lighting Network - (RD-L-13/1)-Z7-L131-SL | 2d | 2027-04-15 | 2027-04-17 | RHD4CZ7L131SL2300, RHD4CZ7L131LV2400 |
|  | 6911 | **RHD4-02-002-L131-(SL)-Street Lighting Drawpit** |  | 2027-04-27 | 2027-05-01 |  |
| RHD4CZ7L131SL5100 |  | Excavation of Drawpit size 600x600x900mm for Street Lighting Network - (RD-L-13/1)-Z7-L131-SL | 2d | 2027-04-27 | 2027-04-28 | RHD4ENSDZ7APPSL170, RHD4CZ7L131SL2300, RHD4CZ7L131LV3400 |
| RHD4CZ7L131SL5200 |  | Installation of Drawpit size 600x600x900mm for Street Lighting Network - (RD-L-13/1)-Z7-L131-SL | 2d | 2027-04-29 | 2027-05-01 | RHD4PRSHLDOSSL1400, RHD4PRSHLSTAGSL1400, RHD4CZ7L131SL5100 |
|  | 6912 | **RHD4-02-002-L131-(SL)-Street Lighting cables** |  | 2027-05-02 | 2027-05-27 |  |
| RHD4CZ7L131SL3100 |  | Excavation for Street Lighting Cables for Street Lighting Network - (RD-L-13/1)-Z7-L131-SL | 6d | 2027-05-02 | 2027-05-08 | RHD4ENSDZ7APPSL170, RHD4CZ7L131SL5200 |
| RHD4CZ7L131SL3200 |  | Cable Laying of Street Lighting Cables for Street Lighting Network - (RD-L-13/1)-Z7-L131-SL | 5d | 2027-05-09 | 2027-05-13 | RHD4PRSHLDOSSL1100, RHD4ENMSSL2000, RHD4ENMSSL2010, RHD4PRSHLSTAGSL1100, RHD4CZ7L131SL3100 |
| RHD4CZ7L131SL3300 |  | Warning tape and Backfill for Street Lighting Cables for Street Lighting Network - (RD-L-13/1)-Z7-L131-SL | 5d | 2027-05-19 | 2027-05-24 | RHD4CZ7L131SL3200 |
| RHD4CZ7L131SL3400 |  | Testing of Street Lighting Cables for Street Lighting Network - (RD-L-13/1)-Z7-L131-SL | 3d | 2027-05-25 | 2027-05-27 | RHD4CZ7L131SL3300 |
|  | 6913 | **RHD4-02-002-L131-(SL)-Street Lighting Poles** |  | 2027-05-29 | 2027-06-16 |  |
| RHD4CZ7L131SL1100 |  | Excavation for RC Base for Lighting Poles for Street Lighting Network - (RD-L-13/1)-Z7-L131-SL | 3d | 2027-05-29 | 2027-05-31 | RHD4ENSDZ7APPSL170, RHD4CZ7L131SL2400, RHD4CZ7L131SL3400 |
| RHD4CZ7L131SL1200 |  | Installation for RC Base for Lighting Poles for Street Lighting Network - (RD-L-13/1)-Z7-L131-SL | 3d | 2027-06-01 | 2027-06-03 | RHD4CZ7L131SL1100 |
| RHD4CZ7L131SL1300 |  | Backfill for RC Base for Lighting Poles for Street Lighting Network - (RD-L-13/1)-Z7-L131-SL | 3d | 2027-06-05 | 2027-06-07 | RHD4CZ7L131SL1200 |
| RHD4CZ7L131SL1400 |  | Installation for Lighting Poles for Street Lighting Network - (RD-L-13/1)-Z7-L131-SL | 5d | 2027-06-08 | 2027-06-13 | RHD4PRSHLDOSSL1200, RHD4ENMSSL2000, RHD4ENMSSL2010, RHD4PRSHLSTAGSL1200, RHD4CZ7L131SL1300, RHD4CZ7L131SL3400 |
| RHD4CZ7L131SL1500 |  | Luminaire Installation for Lighting Poles for Street Lighting Network - (RD-L-13/1)-Z7-L131-SL | 3d | 2027-06-14 | 2027-06-16 | RHD4PRSHLDOSSL1300, RHD4PRSHLSTAGSL1300, RHD4CZ7L131SL1400 |
|  | 6915 | **RHD4-02-002-L131-(SL)-Street Lighting Earthing System** |  |  |  |  |
|  | 6921 | **RHD4-02-002-Z7-L131-Telecommunications Network - TC** |  | 2027-04-11 | 2027-07-05 |  |
|  | 6922 | **RHD4-02-002-L131-(TC)-Telecommunications Ducts** |  | 2027-06-17 | 2027-07-05 |  |
| RHD4CZ7L131TC2100 |  | Excavation of HDPE Ducts for Telecom Network - (RD-L-13/1)-Z7-L131-TC | 3d | 2027-06-17 | 2027-06-20 | RHD4ENSDZ7APPTC190, RHD4CZ7L131LV2100, RHD4CZ7L131SL1500 |
| RHD4CZ7L131TC2200 |  | Installation of HDPE Ducts for Telecom Network - (RD-L-13/1)-Z7-L131-TC | 5d | 2027-06-21 | 2027-06-26 | RHD4PRSHLDOSTC1000, RHD4PRSHLSTAGTC1000, RHD4CZ7L131TC2100 |
| RHD4CZ7L131TC2400 |  | Backfilling of HDPE Ducts for Telecom Network - (RD-L-13/1)-Z7-L131-TC | 8d | 2027-06-27 | 2027-07-05 | RHD4CZ7L131TC2200 |
|  | 6923 | **RHD4-02-002-L131-(TC)-Telecommunications Manholes** |  | 2027-06-21 | 2027-06-27 |  |
| RHD4CZ7L131TC5100 |  | Excavation for Manholes for Telecom Network - (RD-L-13/1)-Z7-L131-TC | 3d | 2027-06-21 | 2027-06-23 | RHD4ENSDZ7APPTC190, RHD4CZ7L131TC2100 |
| RHD4CZ7L131TC5200 |  | Installation of Manholes for Telecom Network - (RD-L-13/1)-Z7-L131-TC | 3d | 2027-06-24 | 2027-06-27 | RHD4PRSHLDOSTC1200, RHD4PRSHLSTAGTC1200, RHD4CZ7L131TC5100, RHD4CZ7L131TC2200 SS |
|  | 6924 | **RHD4-02-002-L131-(TC)-Telecomminications Road Crossings** |  | 2027-04-11 | 2027-05-01 |  |
| RHD4CZ7L131TC3100 |  | Excavation for Road Crossings for Telecom Network - (RD-L-13/1)-Z7-L131-TC | 4d | 2027-04-11 | 2027-04-14 | RHD4ENSDZ7APPTC190, RHD4CZ7L131SL2100 |
| RHD4CZ7L131TC3200 |  | Installation of Road Crossings for Telecom Network - (RD-L-13/1)-Z7-L131-TC | 5d | 2027-04-15 | 2027-04-20 | RHD4PRSHLDOSTC1100, RHD4PRSHLSTAGTC1100, RHD4CZ7L131TC3100, RHD4CZ7L131SL2200 |
| RHD4CZ7L131TC3300 |  | Pouring of Road Crossings for Telecom Network - (RD-L-13/1)-Z7-L131-TC | 5d | 2027-04-21 | 2027-04-26 | RHD4CZ7L131TC3200, RHD4CZ7L131SL2300 |
| RHD4CZ7L131TC3400 |  | Backfilling of Road Crossings for Telecom Network - (RD-L-13/1)-Z7-L131-TC | 4d | 2027-04-27 | 2027-05-01 | RHD4CZ7L131TC3300, RHD4CZ7L131SL2400, RHD4CZ7L131LV2400 |
|  | 6925 | **RHD4-02-002-Z7-L131-Information and Communication Technologies - ICT** |  | 2027-04-15 | 2027-07-25 |  |
|  | 6926 | **RHD4-02-002-L131-(ICT)-Information and Communication Technologies Ducts** |  | 2027-06-28 | 2027-07-25 |  |
| RHD4CZ7L131ICT2100 |  | Excavation of HDPE Ducts for ICT Network - (RD-L-13/1)-Z7-L131-ICT | 8d | 2027-06-28 | 2027-07-06 | RHD4ENSDZ7APPICT200, RHD4CZ7L131ICT3400, RHD4CZ7L131TC5200 |
| RHD4CZ7L131ICT2200 |  | Installation of HDPE Ducts for ICT Network - (RD-L-13/1)-Z7-L131-ICT | 5d | 2027-07-07 | 2027-07-12 | RHD4PRSHLDOSICT1000, RHD4PRSHLSTAGICT1000, RHD4CZ7L131ICT2100 |
| RHD4CZ7L131ICT2400 |  | Backfilling of HDPE Ducts for ICT Network - (RD-L-13/1)-Z7-L131-ICT | 8d | 2027-07-17 | 2027-07-25 | RHD4CZ7L131ICT2200, RHD4CZ7L131ICT5200 |
|  | 6927 | **RHD4-02-002-L131-(ICT)-Information and Communication Technologies Manholes** |  | 2027-07-07 | 2027-07-15 |  |
| RHD4CZ7L131ICT5100 |  | Excavation for Manholes for ICT Network - (RD-L-13/1)-Z7-L131-ICT | 4d | 2027-07-07 | 2027-07-11 | RHD4ENSDZ7APPICT200, RHD4CZ7L131ICT2100 |
| RHD4CZ7L131ICT5200 |  | Installation of Manholes for ICT Network - (RD-L-13/1)-Z7-L131-ICT | 4d | 2027-07-12 | 2027-07-15 | RHD4PRSHLDOSICT1200, RHD4PRSHLSTAGICT1200, RHD4CZ7L131ICT5100 |
|  | 6928 | **RHD4-02-002-L131-(ICT)-Information and Communication Technologies Road Crossings** |  | 2027-04-15 | 2027-05-09 |  |
| RHD4CZ7L131ICT3100 |  | Excavation for Road Crossings for ICT Network - (RD-L-13/1)-Z7-L131-ICT | 4d | 2027-04-15 | 2027-04-19 | RHD4ENSDZ7APPICT200, RHD4CZ7L131TC3100 |
| RHD4CZ7L131ICT3200 |  | Installation of Road Crossings for ICT Network - (RD-L-13/1)-Z7-L131-ICT | 6d | 2027-04-21 | 2027-04-27 | RHD4PRSHLDOSICT1100, RHD4PRSHLSTAGICT1100, RHD4CZ7L131ICT3100, RHD4CZ7L131TC3200 |
| RHD4CZ7L131ICT3300 |  | Pouring of Road Crossings for ICT Network - (RD-L-13/1)-Z7-L131-ICT | 6d | 2027-04-28 | 2027-05-04 | RHD4CZ7L131ICT3200, RHD4CZ7L131TC3300 |
| RHD4CZ7L131ICT3400 |  | Backfilling of Road Crossings for ICT Network - (RD-L-13/1)-Z7-L131-ICT | 4d | 2027-05-05 | 2027-05-09 | RHD4CZ7L131ICT3300, RHD4CZ7L131TC3400 |
|  | 6916 | **RHD4-02-002-Z7-L131-Landscape Network - LS** |  |  |  |  |
|  | 6917 | **RHD4-02-002-L131-(LS)-Landscape Lighting cables** |  |  |  |  |
|  | 6919 | **RHD4-02-002-L131-(LS)-Landscape Bollard Poles** |  |  |  |  |
|  | 6929 | **RHD4-02-002-Z7-L131-Security Network - CCTV** |  | 2027-07-26 | 2027-08-23 |  |
|  | 6930 | **RHD4-02-002-L131-(CCTV)-Civil Works** |  | 2027-07-26 | 2027-07-31 |  |
| RHD4CZ7L131CCTV2100 |  | Civil Works for Security Network - (RD-L-13/1)-Z7-L131-CCTV | 5d | 2027-07-26 | 2027-07-31 | RHD4CZ7L131ICT2400, RHD4CZ7L131TC2400 |
|  | 4851 | **RHD4-02-002-L131-(CCTV)-CCTV Poles** |  | 2027-08-01 | 2027-08-11 |  |
| RHD4CZ7L131CCTV1100 |  | Excavation for RC Base for CCTV Poles for Security Network - (RD-L-13/1)-Z7-L131-CCTV | 2d | 2027-08-01 | 2027-08-02 | RHD4CZ7L131CCTV2100 |
| RHD4CZ7L131CCTV1200 |  | Installation for RC Base for CCTV Poles for Security Network - (RD-L-13/1)-Z7-L131-CCTV | 2d | 2027-08-03 | 2027-08-04 | RHD4CZ7L131CCTV1100 |
| RHD4CZ7L131CCTV1300 |  | Backfill for RC Base for CCTV Poles for Security Network - (RD-L-13/1)-Z7-L131-CCTV | 2d | 2027-08-05 | 2027-08-07 | RHD4CZ7L131CCTV1200 |
| RHD4CZ7L131CCTV1400 |  | Installation for CCTV Poles for Security Network - (RD-L-13/1)-Z7-L131-CCTV | 2d | 2027-08-08 | 2027-08-09 | RHD4CZ7L131CCTV1300 |
| RHD4CZ7L131CCTV1500 |  | Protection post Installation for CCTV Poles for Security Network - (RD-L-13/1)-Z7-L131-CCTV | 2d | 2027-08-10 | 2027-08-11 | RHD4CZ7L131CCTV1400 |
|  | 4852 | **RHD4-02-002-L131-(CCTV)-Camera** |  | 2027-08-12 | 2027-08-14 |  |
| RHD4CZ7L131CCTV3100 |  | Installation for Cameras for Security Network - (RD-L-13/1)-Z7-L131-CCTV | 2d | 2027-08-12 | 2027-08-14 | RHD4CZ7L131CCTV1400, RHD4CZ7L131CCTV4100 |

| ID | WBS | Task | Duration | Start | Finish | Predecessors |
| --- | --- | --- | --- | --- | --- | --- |
|  | 4853 | **RHD4-02-002-L131-(CCTV)-Power and Infrastructure** |  | 2027-08-10 | 2027-08-14 |  |
| RHD4CZ7L131CCTV4100 |  | Installation of Power outlet, UPS and midspan for PTZ Camerafor Cameras for Security Network - (RD-L-13/1)-Z7-L131-CCTV | 2d | 2027-08-10 | 2027-08-11 | RHD4CZ7L131CCTV1400 |
| RHD4CZ7L131CTV4200 |  | Short Range Wireless PoP wireless Bridgefor CCTV Poles for Security Network - (RD-C-2)-Z7-C02-CCTV | 2d | 2027-08-12 | 2027-08-14 | RHD4CZ7L131CCTV4100 |
|  | 4855 | **RHD4-02-002-L131-(CCTV)-CCTV Panels and Components** |  | 2027-08-15 | 2027-08-23 |  |
| RHD4CZ7L131CCTV6100 |  | Installation for CCTV Panels for Security Network - (RD-L-13/1)-Z7-L131-CCTV | 8d | 2027-08-15 | 2027-08-23 | RHD4CZ7L131CCTV3100, RHD4CZ7L131CCTV1500, RHD4CZ7L131SW1501, RHD4CZ7L131SW3500, RHD4CZ7L03IRR3202, RHD4CZ7A012IRR3202 |
|  | 7135 | **RHD4-02-002-Z7-C013** |  | 2026-08-29 | 2027-08-30 |  |
|  | 7166 | **RHD4-02-002-Z7-C013-Crossings Sewage Network - SWCr** |  |  |  |  |
|  | 7182 | **RHD4-02-002-C013-(SWCr)-Air Valve Chambers** |  |  |  |  |
|  | 7183 | **RHD4-02-002-C013-(SWCr)-Air Valves** |  |  |  |  |
|  | 7257 | **RHD4-02-002-Z7-C013-Crossings Irrigation Network - IRRC** |  |  |  |  |
|  | 7262 | **RHD4-02-002-C013-(IRRC)-HDPE Pipes - 315 mm diameter** |  |  |  |  |
|  | 7314 | **RHD4-02-002-Z7-C013-Road Works - RD** |  | 2026-09-06 | 2027-08-30 |  |
|  | 7315 | **RHD4-02-002-C013-(RD)-Subgrade** |  | 2026-09-06 | 2026-09-14 |  |
| RHD4CZ7C013RD1100 |  | Supply, lay and compaction subgrade compacted thickness 300 mm for Roads - (RD-C-1/3)-Z7-C013-RD | 8d | 2026-09-06 | 2026-09-14 | RHD4ENSDZ7APPEW100, RHD4ENSDZ7APPRD220, RHD4CZ7C032RD1100 |
|  | 7316 | **RHD4-02-002-C013-(RD)-Aggregate Base Course** |  | 2026-09-15 | 2026-09-26 |  |
| RHD4CZ7C013RD2100 |  | Supply, lay and compaction Aggregate base course compacted thickness 300 mmfor Roads - (RD-C-1/3)-Z7-C013-RD | 9d | 2026-09-15 | 2026-09-26 | RHD4PRSHLDOSRD1000, RHD4PRSHLSTAGRD1000, RHD4CZ7C013RD1100 |
|  | 7317 | **RHD4-02-002-C013-(RD)-Bituminous base course Two Layers, including (MC1)&(RC2)** |  | 2026-09-27 | 2027-06-06 |  |
| RHD4CZ7C013RD3100 |  | Supply, lay and Asphaltic base course including Prime Coat (MC1) for 1st Layer - (RD-C-1/3)-Z7-C013-RD | 4d | 2026-09-27 | 2026-09-30 | RHD4PRSHLDOSRD1100, RHD4ENMSASPH2000, RHD4ENMSASPH2010, RHD4PRSHLSTAGRD1100, RHD4CZ7C013RD2100 |
| RHD4CZ7C013RD3200 |  | Supply, lay and Asphaltic base course including Tack Coat (RC2) for 2nd Layer - (RD-C-1/3)-Z7-C013-RD | 4d | 2027-06-02 | 2027-06-06 | RHD4PRSHLDOSRD1100, RHD4PRSHLSTAGRD1100, RHD4CZ7C013ICT5200, RHD4CZ7L131RD3200 |
|  | 7319 | **RHD4-02-002-C013-(RD)-Precast Concrete Curb** |  | 2027-06-07 | 2027-06-12 |  |
| RHD4CZ7C013RD5100 |  | Supply and installation Precast Concrete Kerb for Roads - (RD-C-1/3)-Z7-C013-RD | 5d | 2027-06-07 | 2027-06-12 | RHD4PRSHLDOSRD1200, RHD4ENMSRD2000, RHD4ENMSRD2010, RHD4PRSHLSTAGRD1200, RHD4CZ7C013RD3200 |
|  | 7322 | **RHD4-02-002-C013-(RD)-Traffic Signage** |  | 2027-08-24 | 2027-08-30 |  |
| RHD4CZ7C013RD8100 |  | Installation of Traffic Signage for Road Network - (RD-C-1/3)-Z7-C013-RD | 6d | 2027-08-24 | 2027-08-30 | RHD4PRSHLDOSRD1600, RHD4PRSHLSTAGRD1600, RHD4CZ7C013RD5100, RHD4CZ7C013TC2400, RHD4CZ7C013ICT2400, RHD4CZ7L131CCTV6100, RHD4CZ7L131CCTV6100 FF |
|  | 7320 | **RHD4-02-002-C013-(RD)-Precast Interlocking Block Pavers** |  |  |  |  |
|  | 7318 | **RHD4-02-002-C013-(RD)-Bituminous concrete wearing course including tack coat (RC2)** |  | 2027-06-13 | 2027-06-14 |  |
| RHD4CZ7C013RD4100 |  | Supply, lay and compaction Asphaltic wearing course including tack Coat (RC2)for Road Network - (RD-C-1/3)-Z7-C013-RD | 2d | 2027-06-13 | 2027-06-14 | RHD4CZ7C013RD5100 |
|  | 7321 | **RHD4-02-002-C013-(RD)-Pavement Marking** |  | 2027-06-15 | 2027-06-21 |  |
| RHD4CZ7C013RD7100 |  | Pavement Markings for Road Network - (RD-C-1/3)-Z7-C013-RD | 6d | 2027-06-15 | 2027-06-21 | RHD4PRSHLDOSRD1500, RHD4PRSHLSTAGRD1500, RHD4CZ7C013RD4100 |
|  | 7240 | **RHD4-02-002-Z7-C013-Irrigation Network - IRR** |  | 2026-08-29 | 2026-10-10 |  |
|  | 7246 | **RHD4-02-002-C013-(IRR)-HDPE Pipes - 400 mm diameter** |  |  |  |  |
|  | 1770 | **RHD4-02-002-C013-(IRR)-Air Valves** |  | 2026-10-04 | 2026-10-07 |  |
| RHD4CZ7C013IRR3103 |  | Installation for Air Valves for Irrigation Network - (RD-C-1/3)-Z7-C013-IRR | 2d | 2026-10-04 | 2026-10-05 | RHD4CZ7C013IRR2302 |
| RHD4CZ7C013IRR3203 |  | Stem and Service box for Air Valves for Irrigation Network - (RD-C-1/3)-Z7-C013-IRR | 2d | 2026-10-06 | 2026-10-07 | RHD4CZ7C013IRR3103, RHD4CZ7C013IRR2402 |
|  | 7245 | **RHD4-02-002-C013-(IRR)-HDPE Pipes - 315 mm diameter** |  | 2026-08-29 | 2026-09-08 |  |
| RHD4CZ7C013IRR1104 |  | Excavation works for HDPE Pipline 315 mm - (RD-C-1/3)-Z7-C013-IRR | 2d | 2026-08-29 | 2026-08-30 | RHD4ENSDZ7APPIRR140, RHD4ENMSRR2000, RHD4CZ7C013RW3000 |
| RHD4CZ7C013IRR1204 |  | Bedding works for HDPE Pipline 315 mm - (RD-C-1/3)-Z7-C013-IRR | 2d | 2026-08-31 | 2026-09-01 | RHD4CZ7C013IRR1104 |
| RHD4CZ7C013IRR1304 |  | Installing for HDPE Pipline 315 mm - (RD-C-1/3)-Z7-C013-IRR | 2d | 2026-09-02 | 2026-09-03 | RHD4PRSHLDOSIRR1000, RHD4PRSHLSTAGIRR1000, RHD4CZ7C013IRR1204 |
| RHD4CZ7C013IRR1404 |  | Primary Test for HDPE Pipline 315 mm - (RD-C-1/3)-Z7-C013-IRR | 2d | 2026-09-05 | 2026-09-06 | RHD4CZ7C013IRR1304 |
| RHD4CZ7C013IRR1504 |  | Backfilling and warning tape works for HDPE Pipline 315 mm - (RD-C-1/3)-Z7-C013-IRR | 2d | 2026-09-07 | 2026-09-08 | RHD4CZ7C013IRR1404 |
|  | 6107 | **RHD4-02-002-C013-(IRR)-HDPE Pipes - 160 mm diameter** |  | 2026-08-31 | 2026-09-10 |  |
| RHD4CZ7C013IRR1100 |  | Excavation works for HDPE Pipline 160 mm - (RD-C-1/3)-Z7-C013-IRR | 2d | 2026-08-31 | 2026-09-01 | RHD4CZ7C013IRR1104 |
| RHD4CZ7C013IRR1200 |  | Bedding works for HDPE Pipline 160 mm - (RD-C-1/3)-Z7-C013-IRR | 2d | 2026-09-02 | 2026-09-03 | RHD4CZ7C013IRR1100 |
| RHD4CZ7C013IRR1300 |  | Installing for HDPE Pipline 160 mm - (RD-C-1/3)-Z7-C013-IRR | 2d | 2026-09-05 | 2026-09-06 | RHD4CZ7C013IRR1200 |
| RHD4CZ7C013IRR1400 |  | Primary Test for HDPE Pipline 160 mm - (RD-C-1/3)-Z7-C013-IRR | 2d | 2026-09-07 | 2026-09-08 | RHD4CZ7C013IRR1300 |
| RHD4CZ7C013IRR1500 |  | Backfilling and warning tape works for HDPE Pipline 160 mm - (RD-C-1/3)-Z7-C013-IRR | 2d | 2026-09-09 | 2026-09-10 | RHD4CZ7C013IRR1400 |
|  | 6115 | **RHD4-02-002-C013-(IRR)-Gate Valves (Direct Buried)** |  | 2026-10-06 | 2026-10-10 |  |
| RHD4CZ7C013IRR3100 |  | Installation for Direct Buried Gate Valves - (RD-C-1/3)-Z7-C013-IRR | 2d | 2026-10-06 | 2026-10-07 | RHD4CZ7C013IRR2402, RHD4CZ7C013RD3100 |
| RHD4CZ7C013IRR3200 |  | Stem and Service box for Direct Buried Gate Valves - (RD-C-1/3)-Z7-C013-IRR | 2d | 2026-10-08 | 2026-10-10 | RHD4CZ7C013IRR3100, RHD4CZ7C013IRR1500 |
|  | 1769 | **RHD4-02-002-C013-(IRR)-Air Valve Chamber** |  | 2026-09-27 | 2026-10-05 |  |
| RHD4CZ7C013IRR2102 |  | Excavation and Bedding for Valve Chamber for Irrigation Network - (RD-C-1/3)-Z7-C013-IRR | 2d | 2026-09-27 | 2026-09-28 | RHD4CZ7C013IRR1501 |
| RHD4CZ7C013IRR2202 |  | PC works for Valve Chamber for Irrigation Network - (RD-C-1/3)-Z7-C013-IRR | 2d | 2026-09-29 | 2026-09-30 | RHD4CZ7C013IRR2102 |
| RHD4CZ7C013IRR2302 |  | Installation for Valve Chamber for Irrigation Network - (RD-C-1/3)-Z7-C013-IRR | 2d | 2026-10-01 | 2026-10-03 | RHD4CZ7C013IRR2202 |
| RHD4CZ7C013IRR2402 |  | Backfilling works for Valve Chamber for Irrigation Network - (RD-C-1/3)-Z7-C013-IRR | 2d | 2026-10-04 | 2026-10-05 | RHD4CZ7C013IRR2302 |
|  | 8188 | **RHD4-02-002-C013-(IRR)-HDPE Pipes - 180 mm diameter** |  | 2026-09-02 | 2026-09-26 |  |
| RHD4CZ7C013IRR1101 |  | Excavation works for HDPE Pipline 180 mm - (RD-C-1/3)-Z7-C013-IRR | 5d | 2026-09-02 | 2026-09-07 | RHD4CZ7C013IRR1100 |
| RHD4CZ7C013IRR1201 |  | Bedding works for HDPE Pipline 180 mm - (RD-C-1/3)-Z7-C013-IRR | 4d | 2026-09-08 | 2026-09-12 | RHD4CZ7C013IRR1101 |
| RHD4CZ7C013IRR1301 |  | Installing for HDPE Pipline 180 mm - (RD-C-1/3)-Z7-C013-IRR | 5d | 2026-09-13 | 2026-09-17 | RHD4CZ7C013IRR1201 |
| RHD4CZ7C013IRR1401 |  | Primary Test for HDPE Pipline 180 mm - (RD-C-1/3)-Z7-C013-IRR | 2d | 2026-09-19 | 2026-09-20 | RHD4CZ7C013IRR1301 |
| RHD4CZ7C013IRR1501 |  | Backfilling and warning tape works for HDPE Pipline 180 mm - (RD-C-1/3)-Z7-C013-IRR | 4d | 2026-09-21 | 2026-09-26 | RHD4CZ7C013IRR1401 |
|  | 7274 | **RHD4-02-002-Z7-C013-Medium Voltage Network - MV** |  | 2026-10-11 | 2026-10-31 |  |
|  | 7275 | **RHD4-02-002-C013-(MV)-Medium Voltage cable trench** |  | 2026-10-11 | 2026-10-28 |  |
| RHD4CZ7C013MV1100 |  | Excavation for Medium Voltage Trench - (RD-C-1/3)-Z7-C013-MV | 4d | 2026-10-11 | 2026-10-14 | RHD4ENSDZ7APPMV150, RHD4CZ7C013IRR3200 |
| RHD4CZ7C013MV1200 |  | Trench Backfilling for Medium Voltage Network - (RD-C-1/3)-Z7-C013-MV | 4d | 2026-10-25 | 2026-10-28 | RHD4CZ7C013MV3200 |
|  | 7277 | **RHD4-02-002-C013-(MV)-Medium Voltage cables 3Cx 500 mm²** |  | 2026-10-15 | 2026-10-31 |  |
| RHD4CZ7C013MV3100 |  | Installation of Medium Voltage Cables 3Cx 500 mm² - (RD-C-1/3)-Z7-C013-MV | 6d | 2026-10-15 | 2026-10-21 | RHD4PRSHLDOSMV1100, RHD4ENMSMV2000, RHD4ENMSMV2010, RHD4PRSHLSTAGMV1100, RHD4CZ7C013MV1100 |
| RHD4CZ7C013MV3200 |  | Joints Installation of Medium Voltage Cables 3Cx 500 mm² - (RD-C-1/3)-Z7-C013-MV | 2d | 2026-10-22 | 2026-10-24 | RHD4PRSHLDOSMV1300, RHD4PRSHLSTAGMV1300, RHD4CZ7C013MV3100 |
| RHD4CZ7C013MV3300 |  | Testing of Medium Voltage Cables 3Cx 500 mm² - (RD-C-1/3)-Z7-C013-MV | 2d | 2026-10-29 | 2026-10-31 | RHD4CZ7C013MV3200, RHD4CZ7C013MV1200 |
|  | 1791 | **RHD4-02-002-C013-(MV)-Medium Voltage duct banks** |  |  |  |  |
|  | 7281 | **RHD4-02-002-Z7-C013-Low Voltage Network - LV** |  |  |  |  |
|  | 7282 | **RHD4-02-002-C013-(LV)-Low Voltage duct banks** |  |  |  |  |

| ID | WBS | Task | Duration | Start | Finish | Predecessors |
| --- | --- | --- | --- | --- | --- | --- |
|  | 7287 | **RHD4-02-002-Z7-C013-Street Lighting Network - SL** |  | 2027-01-06 | 2027-02-02 |  |
|  | 7290 | **RHD4-02-002-C013-(SL)-Street Lighting cables** |  | 2027-01-06 | 2027-01-18 |  |
| RHD4CZ7C013SL3100 |  | Excavation for Street Lighting Cables for Street Lighting Network - (RD-C-1/3)-Z7-C013-SL | 3d | 2027-01-06 | 2027-01-09 | RHD4ENSDZ7APPSL170, RHD4CZ7L131ST3100, RHD4CZ7C013MV3300 |
| RHD4CZ7C013SL3200 |  | Cable Laying of Street Lighting Cables for Street Lighting Network - (RD-C-1/3)-Z7-C013-SL | 3d | 2027-01-10 | 2027-01-12 | RHD4PRSHLDOSSL1100, RHD4ENMSSL2000, RHD4ENMSSL2010, RHD4PRSHLSTAGSL1100, RHD4CZ7C013SL3100 |
| RHD4CZ7C013SL3300 |  | Warning tape and Backfill for Street Lighting Cables for Street Lighting Network - (RD-C-1/3)-Z7-C013-SL | 3d | 2027-01-13 | 2027-01-16 | RHD4CZ7C013SL3200 |
| RHD4CZ7C013SL3400 |  | Testing of Street Lighting Cables for Street Lighting Network - (RD-C-1/3)-Z7-C013-SL | 2d | 2027-01-17 | 2027-01-18 | RHD4CZ7C013SL3300 |
|  | 7291 | **RHD4-02-002-C013-(SL)-Street Lighting Poles** |  | 2027-01-19 | 2027-01-31 |  |
| RHD4CZ7C013SL1100 |  | Excavation for RC Base for Lighting Poles for Street Lighting Network - (RD-C-1/3)-Z7-C013-SL | 2d | 2027-01-19 | 2027-01-20 | RHD4ENSDZ7APPSL170, RHD4CZ7C013SL3400 |
| RHD4CZ7C013SL1200 |  | Installation for RC Base for Lighting Poles for Street Lighting Network - (RD-C-1/3)-Z7-C013-SL | 2d | 2027-01-21 | 2027-01-23 | RHD4CZ7C013SL1100 |
| RHD4CZ7C013SL1300 |  | Backfill for RC Base for Lighting Poles for Street Lighting Network - (RD-C-1/3)-Z7-C013-SL | 2d | 2027-01-24 | 2027-01-25 | RHD4CZ7C013SL1200 |
| RHD4CZ7C013SL1400 |  | Installation for Lighting Poles for Street Lighting Network - (RD-C-1/3)-Z7-C013-SL | 2d | 2027-01-26 | 2027-01-27 | RHD4PRSHLDOSSL1200, RHD4ENMSSL2000, RHD4ENMSSL2010, RHD4PRSHLSTAGSL1200, RHD4CZ7C013SL1300 |
| RHD4CZ7C013SL1500 |  | Luminaire Installation for Lighting Poles for Street Lighting Network - (RD-C-1/3)-Z7-C013-SL | 3d | 2027-01-28 | 2027-01-31 | RHD4PRSHLDOSSL1300, RHD4PRSHLSTAGSL1300, RHD4CZ7C013SL1400 |
|  | 7293 | **RHD4-02-002-C013-(SL)-Street Lighting Earthing System** |  | 2027-02-01 | 2027-02-02 |  |
| RHD4CZ7C013SL6100 |  | Installation of Earthing for Lighting Poles and Fedder Pillers for Street Lighting Network - (RD-C-1/3)-Z7-C013-SL | 2d | 2027-02-01 | 2027-02-02 | RHD4ENMSER2000, RHD4ENMSER2010, RHD4CZ7C013SL1500 |
|  | 7299 | **RHD4-02-002-Z7-C013-Telecommunications Network - TC** |  | 2027-02-03 | 2027-02-15 |  |
|  | 7300 | **RHD4-02-002-C013-(TC)-Telecommunications Ducts** |  | 2027-02-03 | 2027-02-15 |  |
| RHD4CZ7C013TC2100 |  | Excavation of HDPE Ducts for Telecom Network - (RD-C-1/3)-Z7-C013-TC | 3d | 2027-02-03 | 2027-02-06 | RHD4ENSDZ7APPTC190, RHD4CZ7C013SL6100 |
| RHD4CZ7C013TC2200 |  | Installation of HDPE Ducts for Telecom Network - (RD-C-1/3)-Z7-C013-TC | 5d | 2027-02-07 | 2027-02-11 | RHD4PRSHLDOSTC1000, RHD4PRSHLSTAGTC1000, RHD4CZ7C013TC2100 |
| RHD4CZ7C013TC2400 |  | Backfilling of HDPE Ducts for Telecom Network - (RD-C-1/3)-Z7-C013-TC | 3d | 2027-02-13 | 2027-02-15 | RHD4CZ7C013TC2200, RHD4CZ7C013TC5200 |
|  | 7301 | **RHD4-02-002-C013-(TC)-Telecommunications Manholes** |  | 2027-02-07 | 2027-02-10 |  |
| RHD4CZ7C013TC5100 |  | Excavation for Manholes for Telecom Network - (RD-C-1/3)-Z7-C013-TC | 2d | 2027-02-07 | 2027-02-08 | RHD4ENSDZ7APPTC190, RHD4CZ7C013TC2100 |
| RHD4CZ7C013TC5200 |  | Installation of Manholes for Telecom Network - (RD-C-1/3)-Z7-C013-TC | 2d | 2027-02-09 | 2027-02-10 | RHD4PRSHLDOSTC1200, RHD4PRSHLSTAGTC1200, RHD4CZ7C013TC5100, RHD4CZ7C013TC2200 SS |
|  | 7303 | **RHD4-02-002-Z7-C013-Information and Communication Technologies - ICT** |  | 2027-02-16 | 2027-03-06 |  |
|  | 7304 | **RHD4-02-002-C013-(ICT)-Information and Communication Technologies Ducts** |  | 2027-02-16 | 2027-03-06 |  |
| RHD4CZ7C013ICT2100 |  | Excavation of HDPE Ducts for ICT Network - (RD-C-1/3)-Z7-C013-ICT | 5d | 2027-02-16 | 2027-02-21 | RHD4ENSDZ7APPICT200, RHD4CZ7C013TC2400 |
| RHD4CZ7C013ICT2200 |  | Installation of HDPE Ducts for ICT Network - (RD-C-1/3)-Z7-C013-ICT | 5d | 2027-02-23 | 2027-02-28 | RHD4PRSHLDOSICT1000, RHD4PRSHLSTAGICT1000, RHD4CZ7C013ICT2100 |
| RHD4CZ7C013ICT2400 |  | Backfilling of HDPE Ducts for ICT Network - (RD-C-1/3)-Z7-C013-ICT | 5d | 2027-03-01 | 2027-03-06 | RHD4CZ7C013ICT2200, RHD4CZ7C013ICT5200 |
|  | 7305 | **RHD4-02-002-C013-(ICT)-Information and Communication Technologies Manholes** |  | 2027-02-23 | 2027-02-27 |  |
| RHD4CZ7C013ICT5100 |  | Excavation for Manholes for ICT Network - (RD-C-1/3)-Z7-C013-ICT | 2d | 2027-02-23 | 2027-02-24 | RHD4ENSDZ7APPICT200, RHD4CZ7C013ICT2100, RHD4CZ7C013MV3300 |
| RHD4CZ7C013ICT5200 |  | Installation of Manholes for ICT Network - (RD-C-1/3)-Z7-C013-ICT | 2d | 2027-02-25 | 2027-02-27 | RHD4PRSHLDOSICT1200, RHD4PRSHLSTAGICT1200, RHD4CZ7C013ICT5100 |
|  | 7294 | **RHD4-02-002-Z7-C013-Landscape Network - LS** |  |  |  |  |
|  | 7295 | **RHD4-02-002-C013-(LS)-Landscape Lighting cables** |  |  |  |  |
|  | 7297 | **RHD4-02-002-C013-(LS)-Landscape Bollard Poles** |  |  |  |  |
|  | 7307 | **RHD4-02-002-Z7-C013-Security Network - CCTV** |  |  |  |  |
|  | 7308 | **RHD4-02-002-C013-(CCTV)-Civil Works** |  |  |  |  |
|  | 6568 | **RHD4-02-002-Z7-L015** |  | 2026-08-16 | 2027-11-14 |  |
|  | 6599 | **RHD4-02-002-Z7-L015-Crossings Sewage Network - SWCr** |  |  |  |  |
|  | 6609 | **RHD4-02-002-L015-(SWCr)-MH Works - 1200 mm diameter** |  |  |  |  |
|  | 6605 | **RHD4-02-002-L015-(SWCr)-UPVC Pipes - 200 mm diameter** |  |  |  |  |
|  | 6643 | **RHD4-02-002-Z7-L015-Crossings Potable Network - PTCr** |  |  |  |  |
|  | 6644 | **RHD4-02-002-L015-(PTCr)-HDPE Pipes - 110 mm diameter** |  |  |  |  |
|  | 6649 | **RHD4-02-002-L015-(PTCr)-Gate Valves (Direct Buried)** |  |  |  |  |
|  | 6690 | **RHD4-02-002-Z7-L015-Crossings Irrigation Network - IRRC** |  |  |  |  |
|  | 6691 | **RHD4-02-002-L015-(IRRC)-HDPE Pipes - 160 mm diameter** |  |  |  |  |
|  | 6699 | **RHD4-02-002-L015-(IRRC)-Gate Valves (Direct Buried)** |  |  |  |  |
|  | 6747 | **RHD4-02-002-Z7-L015-Road Works - RD** |  | 2026-08-27 | 2027-11-14 |  |
|  | 6748 | **RHD4-02-002-L015-(RD)-Subgrade** |  | 2026-08-27 | 2026-09-02 |  |
| RHD4CZ7L015RD1100 |  | Supply, lay and compaction subgrade compacted thickness 300 mm for Roads - (RD-L-15)-Z7-L015-RD(Completed) | 6d | 2026-08-27 | 2026-09-02 | RHD4ENSDZ7APPRD220, RHD4ENSDZ7APPEW100 SS, RHD4CZ7L015ST1505 |
|  | 6749 | **RHD4-02-002-L015-(RD)-Aggregate Base Course** |  | 2026-09-03 | 2026-09-09 |  |
| RHD4CZ7L015RD2100 |  | Supply, lay and compaction Aggregate base course compacted thickness 300 mmfor Roads - (RD-L-15)-Z7-L015-RD | 6d | 2026-09-03 | 2026-09-09 | RHD4PRSHLDOSRD1000, RHD4PRSHLSTAGRD1000, RHD4CZ7L015RD1100 |
|  | 6750 | **RHD4-02-002-L015-(RD)-Bituminous base course Two Layers, including (MC1)&(RC2)** |  | 2026-09-10 | 2027-10-07 |  |
| RHD4CZ7L015RD3100 |  | Supply, lay and Asphaltic base course including Prime Coat (MC1) for 1st Layer - (RD-L-15)-Z7-L015-RD | 2d | 2026-09-10 | 2026-09-12 | RHD4PRSHLDOSRD1100, RHD4ENMSASPH2000, RHD4ENMSASPH2010, RHD4PRSHLSTAGRD1100, RHD4CZ7L015RD2100 |
| RHD4CZ7L015RD3200 |  | Supply, lay and Asphaltic base course including Tack Coat (RC2) for 2nd Layer - (RD-L-15)-Z7-L015-RD | 2d | 2027-10-06 | 2027-10-07 | RHD4PRSHLDOSRD1100, RHD4PRSHLSTAGRD1100, RHD4CZ7L015CCTV2100 |
|  | 6752 | **RHD4-02-002-L015-(RD)-Precast Concrete Curb** |  | 2027-10-09 | 2027-10-14 |  |
| RHD4CZ7L015RD5100 |  | Supply and installation Precast Concrete Kerb for Roads - (RD-L-15)-Z7-L015-RD | 6d | 2027-10-09 | 2027-10-14 | RHD4PRSHLDOSRD1200, RHD4ENMSRD2000, RHD4ENMSRD2010, RHD4PRSHLSTAGRD1200, RHD4CZ7L015RD3200, RHD4CZ7L131RD5100 |
|  | 6755 | **RHD4-02-002-L015-(RD)-Traffic Signage** |  | 2027-10-16 | 2027-10-24 |  |
| RHD4CZ7L015RD8100 |  | Installation of Traffic Signage for Road Network - (RD-L-15)-Z7-L015-RD | 8d | 2027-10-16 | 2027-10-24 | RHD4PRSHLDOSRD1600, RHD4PRSHLSTAGRD1600, RHD4CZ7L015RD5100, RHD4CZ7L015TC2400, RHD4CZ7L015ICT2400, RHD4CZ7L131RD8100 |
|  | 6753 | **RHD4-02-002-L015-(RD)-Precast Interlocking Block Pavers** |  | 2027-10-25 | 2027-11-01 |  |
| RHD4CZ7L015RD6100 |  | Interlocking block pavers for sidewalk-footpath for Side walks and Parking areas - (RD-L-15)-Z7-L015-RD | 7d | 2027-10-25 | 2027-11-01 | RHD4PRSHLDOSRD1300, RHD4PRSHLDOSRD1400, RHD4ENMSRD2000, RHD4ENMSRD2010, RHD4PRSHLSTAGRD1300, RHD4PRSHLSTAGRD1400, RHD4CZ7L015RD8100, RHD4CZ7L131RD6100 |
|  | 6751 | **RHD4-02-002-L015-(RD)-Bituminous concrete wearing course including tack coat (RC2)** |  | 2027-11-09 | 2027-11-10 |  |
| RHD4CZ7L015RD4100 |  | Supply, lay and compaction Asphaltic wearing course including tack Coat (RC2)for Road Network - (RD-L-15)-Z7-L015-RD | 2d | 2027-11-09 | 2027-11-10 | RHD4CZ7L015RD5100, RHD4CZ7L015RD6100, RHD4CZ7L131RD4100, RHD4CZ7L015CCTV6100 |
|  | 6754 | **RHD4-02-002-L015-(RD)-Pavement Marking** |  | 2027-11-11 | 2027-11-14 |  |
| RHD4CZ7L015RD7100 |  | Pavement Markings for Road Network - (RD-L-15)-Z7-L015-RD | 3d | 2027-11-11 | 2027-11-14 | RHD4PRSHLDOSRD1500, RHD4PRSHLSTAGRD1500, RHD4CZ7L015RD4100, RHD4CZ7L131RD7100 |
|  | 6572 | **RHD4-02-002-Z7-L015-Storm Network - ST** |  | 2026-08-16 | 2027-02-27 |  |
|  | 6577 | **RHD4-02-002-L015-(ST)-GRP Pipes - 800 mm diameter** |  | 2027-01-09 | 2027-02-18 |  |
| RHD4CZ7L015ST1104 |  | Excavation works for GRP Pipe Line 800 mm - (RD-L-15)-Z7-L015-ST | 2d | 2027-01-09 | 2027-01-10 | RHD4ENSDZ7APPST110, RHD4CZ7L015ST1105, RHD4CZ7L131ST1504, RHD4CZ7L015MV3300 |
| RHD4CZ7L015ST1204 |  | Bedding works for GRP Pipe Line 800 mm - (RD-L-15)-Z7-L015-ST | 2d | 2027-01-11 | 2027-01-12 | RHD4CZ7L015ST1104 |
| RHD4CZ7L015ST1304 |  | Installing for GRP Pipe Line 800 mm - (RD-L-15)-Z7-L015-ST | 2d | 2027-02-13 | 2027-02-14 | RHD4PRSHLSTAGST1006, RHD4CZ7L015ST1204, RHD4CZ7L015ST3301, RHD4PRSHLDOSST1606, RHD4PRSHLPOST1000, RHD4PRSHLDOSST1006, RHD4PRSHLDOSST1605, RHD4PRSHLDOSST1005 |
| RHD4CZ7L015ST1404 |  | Primary Test for GRP Pipe Line 800 mm - (RD-L-15)-Z7-L015-ST | 2d | 2027-02-15 | 2027-02-16 | RHD4CZ7L015ST1304 |
| RHD4CZ7L015ST1504 |  | Backfilling and warning tape works for GRP Pipe Line 800 mm - (RD-L-15)-Z7-L015-ST | 2d | 2027-02-17 | 2027-02-18 | RHD4CZ7L015ST1404 |

| ID | WBS | Task | Duration | Start | Finish | Predecessors |
| --- | --- | --- | --- | --- | --- | --- |
|  | 5254 | **RHD4-02-002-L015-(ST)-GRP Pipes - 900 mm diameter** |  | 2026-08-16 | 2026-08-26 |  |
| RHD4CZ7L015ST1105 |  | Excavation works for GRP Pipe Line 900 mm - (RD-L-15)-Z7-L015-ST | 2d | 2026-08-16 | 2026-08-17 | RHD4ENSDZ7APPRD220, RHD4ENSDZ7APPEW100, RHD4CZ7L015RW3000, RHD4CZ7L131ST1105 SS |
| RHD4CZ7L015ST1205 |  | Bedding works for GRP Pipe Line 900 mm - (RD-L-15)-Z7-L015-ST | 2d | 2026-08-18 | 2026-08-19 | RHD4CZ7L015ST1105 |
| RHD4CZ7L015ST1305 |  | Installing for GRP Pipe Line 900 mm - (RD-L-15)-Z7-L015-ST | 2d | 2026-08-20 | 2026-08-22 | RHD4CZ7L015ST1205 |
| RHD4CZ7L015ST1405 |  | Primary Test for GRP Pipe Line 900 mm - (RD-L-15)-Z7-L015-ST | 2d | 2026-08-23 | 2026-08-24 | RHD4CZ7L015ST1305 |
| RHD4CZ7L015ST1505 |  | Backfilling and warning tape works for GRP Pipe Line 900 mm - (RD-L-15)-Z7-L015-ST | 2d | 2026-08-25 | 2026-08-26 | RHD4CZ7L015ST1405 |
|  | 6008 | **RHD4-02-002-L015-(ST)-GRP Pipes - 600 mm diameter** |  | 2027-01-13 | 2027-01-30 |  |
| RHD4CZ7L015ST1102 |  | Excavation works for GRP Pipe Line 600 mm - (RD-L-15)-Z7-L015-ST | 2d | 2027-01-13 | 2027-01-14 | RHD4CZ7L015ST1103 |
| RHD4CZ7L015ST1202 |  | Bedding works for GRP Pipe Line 600 mm - (RD-L-15)-Z7-L015-ST | 2d | 2027-01-16 | 2027-01-17 | RHD4CZ7L015ST1102 |
| RHD4CZ7L015ST1302 |  | Installing for GRP Pipe Line 600 mm - (RD-L-15)-Z7-L015-ST | 2d | 2027-01-18 | 2027-01-19 | RHD4CZ7L015ST1202 |
| RHD4CZ7L015ST1402 |  | Primary Test for GRP Pipe Line 600 mm - (RD-L-15)-Z7-L015-ST | 2d | 2027-01-20 | 2027-01-21 | RHD4CZ7L015ST1302 |
| RHD4CZ7L015ST1502 |  | Backfilling and warning tape works for GRP Pipe Line 600 mm - (RD-L-15)-Z7-L015-ST | 2d | 2027-01-28 | 2027-01-30 | RHD4CZ7L015ST1402, RHD4CZ7L015ST2500 FF |
|  | 6590 | **RHD4-02-002-L015-(ST)-MH Works - 1500 mm diameter** |  | 2027-01-19 | 2027-02-27 |  |
| RHD4CZ7L015ST3101 |  | Excavation and PC Blinding works for MH 1500 mm - (RD-L-15)-Z7-L015-ST | 7d | 2027-01-19 | 2027-01-26 | RHD4ENSDZ7APPST110, RHD4ENMSST2000, RHD4CZ7L015ST2100 |
| RHD4CZ7L015ST3201 |  | Installation of Base for MH 1500 mm - (RD-L-15)-Z7-L015-ST | 7d | 2027-01-27 | 2027-02-03 | RHD4PRSHLSTAGST1606, RHD4CZ7L015ST3101 |
| RHD4CZ7L015ST3301 |  | MH Ring and C.Slab works and Backfilling works for MH 1500 mm - (RD-L-15)-Z7-L015-ST | 7d | 2027-02-04 | 2027-02-11 | RHD4PRSHLDOSST1606, RHD4CZ7L015ST3201 |
| RHD4CZ7L015ST3401 |  | Steel Cover for MH 1500 mm - (RD-L-15)-Z7-L015-ST | 5d | 2027-02-13 | 2027-02-17 | RHD4PRSHLDOSST1706, RHD4PRSHLSTAGST1706, RHD4CZ7L015ST3301 |
| RHD4CZ7L015ST3501 |  | Finishing, Benching, Testing works for MH 1500 mm - (RD-L-15)-Z7-L015-ST | 7d | 2027-02-18 | 2027-02-27 | RHD4CZ7L015ST3401 |
|  | 6589 | **RHD4-02-002-L015-(ST)-MH Works - 1200 mm diameter** |  | 2027-01-27 | 2027-02-07 |  |
| RHD4CZ7L015ST3100 |  | Excavation and PC Blinding works for MH 1200 mm - (RD-L-15)-Z7-L015-ST | 2d | 2027-01-27 | 2027-01-28 | RHD4ENSDZ7APPST110, RHD4ENMSST2000, RHD4ENMSST2010, RHD4CZ7L015ST3101 |
| RHD4CZ7L015ST3200 |  | Installation of Base for MH 1200 mm - (RD-L-15)-Z7-L015-ST | 2d | 2027-01-30 | 2027-01-31 | RHD4PRSHLSTAGST1606, RHD4CZ7L015ST3100 |
| RHD4CZ7L015ST3300 |  | MH Ring and C.Slab works and Backfilling works for MH 1200 mm - (RD-L-15)-Z7-L015-ST | 2d | 2027-02-01 | 2027-02-02 | RHD4PRSHLDOSST1606, RHD4CZ7L015ST3200 |
| RHD4CZ7L015ST3400 |  | Steel Cover for MH 1200 mm - (RD-L-15)-Z7-L015-ST | 2d | 2027-02-03 | 2027-02-04 | RHD4PRSHLDOSST1706, RHD4PRSHLSTAGST1706, RHD4CZ7L015ST3300 |
| RHD4CZ7L015ST3500 |  | Finishing, Benching, Testing works for MH 1200 mm - (RD-L-15)-Z7-L015-ST | 2d | 2027-02-06 | 2027-02-07 | RHD4CZ7L015ST3400 |
|  | 6576 | **RHD4-02-002-L015-(ST)-GRP Pipes - 700 mm diameter** |  | 2027-01-11 | 2027-02-21 |  |
| RHD4CZ7L015ST1103 |  | Excavation works for GRP Pipe Line 700 mm - (RD-L-15)-Z7-L015-ST | 2d | 2027-01-11 | 2027-01-12 | RHD4ENSDZ7APPST110, RHD4CZ7L015ST1104 |
| RHD4CZ7L015ST1203 |  | Bedding works for GRP Pipe Line 700 mm - (RD-L-15)-Z7-L015-ST | 2d | 2027-01-13 | 2027-01-14 | RHD4CZ7L015ST1103 |
| RHD4CZ7L015ST1303 |  | Installing for GRP Pipe Line 700 mm - (RD-L-15)-Z7-L015-ST | 2d | 2027-02-13 | 2027-02-14 | RHD4PRSHLSTAGST1006, RHD4CZ7L015ST1203, RHD4CZ7L015ST3301, RHD4PRSHLDOSST1606, RHD4PRSHLPOST1000, RHD4PRSHLDOSST1006, RHD4PRSHLDOSST1605, RHD4PRSHLDOSST1005 |
| RHD4CZ7L015ST1403 |  | Primary Test for GRP Pipe Line 700 mm - (RD-L-15)-Z7-L015-ST | 2d | 2027-02-15 | 2027-02-16 | RHD4CZ7L015ST1303 |
| RHD4CZ7L015ST1503 |  | Backfilling and warning tape works for GRP Pipe Line 700 mm - (RD-L-15)-Z7-L015-ST | 2d | 2027-02-20 | 2027-02-21 | RHD4CZ7L015ST1403, RHD4CZ7L015ST1504, RHD4CZ7L015ST1502 |
|  | 6574 | **RHD4-02-002-L015-(ST)-GRP Pipes - 500 mm diameter** |  |  |  |  |
|  | 6573 | **RHD4-02-002-L015-(ST)-GRP Pipes - 400 mm diameter** |  |  |  |  |
|  | 6587 | **RHD4-02-002-L015-(ST)-UPVC Pipes - 300 mm diameter** |  | 2027-01-16 | 2027-01-30 |  |
| RHD4CZ7L015ST2100 |  | Excavation works for UPVC Pipe Line 300 mm - (RD-L-15)-Z7-L015-ST | 3d | 2027-01-16 | 2027-01-18 | RHD4ENSDZ7APPST110, RHD4CZ7L015ST1102 |
| RHD4CZ7L015ST2200 |  | Bedding works for UPVC Pipe Line 300 mm - (RD-L-15)-Z7-L015-ST | 2d | 2027-01-19 | 2027-01-20 | RHD4CZ7L015ST2100 |
| RHD4CZ7L015ST2300 |  | Installing for UPVC Pipe Line 300 mm - (RD-L-15)-Z7-L015-ST | 3d | 2027-01-21 | 2027-01-24 | RHD4PRSHLDOSST1106, RHD4PRSHLSTAGST1106, RHD4CZ7L015ST2200 |
| RHD4CZ7L015ST2400 |  | Primary Test for UPVC Pipe Line 300 mm - (RD-L-15)-Z7-L015-ST | 2d | 2027-01-25 | 2027-01-26 | RHD4CZ7L015ST2300 |
| RHD4CZ7L015ST2500 |  | Backfilling and warning tape works for UPVC Pipe Line 300 mm - (RD-L-15)-Z7-L015-ST | 3d | 2027-01-27 | 2027-01-30 | RHD4CZ7L015ST2400, RHD4CZ7L015ST6100 |
|  | 6595 | **RHD4-02-002-L015-(ST)-Concrete Encasement** |  | 2027-01-21 | 2027-01-23 |  |
| RHD4CZ7L015ST6100 |  | Pipe Encasement for Storm Pipelines - (RD-L-15)-Z7-L015-ST | 2d | 2027-01-21 | 2027-01-23 | RHD4CZ7L015ST2200 |
|  | 6596 | **RHD4-02-002-Z7-L015-Catch Basin - ST** |  | 2027-01-30 | 2027-02-20 |  |
|  | 6597 | **RHD4-02-002-L015-(ST)-Single Catch Basin Works** |  | 2027-01-30 | 2027-02-20 |  |
| RHD4CZ7L015ST7100 |  | Excavation works for Single Catch Basin - (RD-L-15)-Z7-L015-ST | 3d | 2027-01-30 | 2027-02-01 | RHD4ENSDZ7APPST110, RHD4CZ7L015ST3100 |
| RHD4CZ7L015ST7200 |  | PC Blinding, Installation and Pipe connection for Single Catch Basin - (RD-L-15)-Z7-L015-ST | 3d | 2027-02-02 | 2027-02-04 | RHD4CZ7L015ST7100 |
| RHD4CZ7L015ST7300 |  | Rings & C.Slab & Final Backfill for Single Catch Basin - (RD-L-15)-Z7-L015-ST | 4d | 2027-02-06 | 2027-02-09 | RHD4PRSHLDOSST1306, RHD4PRSHLSTAGST1306, RHD4CZ7L015ST7200 |
| RHD4CZ7L015ST7400 |  | Steel Cover for Single Catch Basin - (RD-L-15)-Z7-L015-ST | 3d | 2027-02-10 | 2027-02-13 | RHD4PRSHLDOSST1706, RHD4CZ7L015ST7300 |
| RHD4CZ7L015ST7500 |  | Finishing and Insulation works for Single Catch Basin - (RD-L-15)-Z7-L015-ST | 6d | 2027-02-14 | 2027-02-20 | RHD4CZ7L015ST7400 |
|  | 6621 | **RHD4-02-002-Z7-L015-Sewage Network - SW** |  | 2027-02-23 | 2027-05-05 |  |
|  | 6627 | **RHD4-02-002-L015-(SW)-UPVC Pipes - 200 mm diameter** |  | 2027-02-23 | 2027-03-22 |  |
| RHD4CZ7L015SW2100 |  | Excavation works for UPVC Pipe Line 200 mm - (RD-L-15)-Z7-L015-SW | 4d | 2027-02-23 | 2027-02-27 | RHD4ENSDZ7APPSW120, RHD4CZ7L015ST7500, RHD4CZ7L015ST1503 |
| RHD4CZ7L015SW2200 |  | Bedding works for UPVC Pipe Line 200 mm - (RD-L-15)-Z7-L015-SW | 4d | 2027-02-28 | 2027-03-03 | RHD4CZ7L015SW2100 |
| RHD4CZ7L015SW2300 |  | Installing for UPVC Pipe Line 200 mm - (RD-L-15)-Z7-L015-SW | 5d | 2027-03-04 | 2027-03-13 | RHD4PRSHLSTAGSW1006, RHD4CZ7L015SW2200, RHD4PRSHLPOSW1000, RHD4PRSHLDOSSW1006, RHD4PRSHLDOSSW1306, RHD4PRSHLPOSW1100, RHD4PRSHLDOSSW1106, RHD4PRSHLDOSSW1004, RHD4PRSHLDOSSW1304, RHD4PRSHLDOSSW1104 |
| RHD4CZ7L015SW2400 |  | Primary Test for UPVC Pipe Line 200 mm - (RD-L-15)-Z7-L015-SW | 3d | 2027-03-14 | 2027-03-16 | RHD4CZ7L015SW2300 |
| RHD4CZ7L015SW2500 |  | Backfilling and warning tape works for UPVC Pipe Line 200 mm - (RD-L-15)-Z7-L015-SW | 5d | 2027-03-17 | 2027-03-22 | RHD4CZ7L015SW2400, RHD4CZ7L015ST1502 |
|  | 6631 | **RHD4-02-002-L015-(SW)-MH Works - 1200 mm diameter** |  | 2027-02-28 | 2027-05-05 |  |
| RHD4CZ7L015SW3100 |  | Excavation and PC Blinding works for MH 1200 mm - (RD-L-15)-Z7-L015-SW | 11d | 2027-02-28 | 2027-03-15 | RHD4ENSDZ7APPSW120, RHD4CZ7L015SW2100 |
| RHD4CZ7L015SW3200 |  | Installation of Base for MH 1200 mm - (RD-L-15)-Z7-L015-SW | 12d | 2027-03-16 | 2027-03-29 | RHD4CZ7L015SW3100 |
| RHD4CZ7L015SW3300 |  | MH Ring and C.Slab works and Backfilling works for MH 1200 mm - (RD-L-15)-Z7-L015-SW | 12d | 2027-03-30 | 2027-04-12 | RHD4PRSHLDOSSW1306, RHD4PRSHLSTAGSW1306, RHD4CZ7L015SW3200 |
| RHD4CZ7L015SW3400 |  | Steel Cover for MH 1200 mm - (RD-L-15)-Z7-L015-SW | 8d | 2027-04-13 | 2027-04-21 | RHD4PRSHLDOSSW1406, RHD4PRSHLSTAGSW1406, RHD4CZ7L015SW3300 |
| RHD4CZ7L015SW3500 |  | Finishing, Benching, Testing works for MH 1200 mm - (RD-L-15)-Z7-L015-SW | 12d | 2027-04-22 | 2027-05-05 | RHD4CZ7L015SW3400 |
|  | 6658 | **RHD4-02-002-Z7-L015-Potable Network - PT** |  | 2027-03-17 | 2027-05-26 |  |
|  | 6659 | **RHD4-02-002-L015-(PT)-HDPE Pipes - 110 mm diameter** |  | 2027-03-22 | 2027-04-15 |  |
| RHD4CZ7L015PT1100 |  | Excavation works for HDPE Pipline 110 mm - (RD-L-15)-Z7-L015-PT | 2d | 2027-03-22 | 2027-03-23 | RHD4ENSDZ7APPPT130, RHD4ENMSPT2000, RHD4CZ7L015PT1101 |
| RHD4CZ7L015PT1200 |  | Bedding works for HDPE Pipline 110 mm - (RD-L-15)-Z7-L015-PT | 2d | 2027-03-25 | 2027-03-27 | RHD4CZ7L015PT1100, RHD4CZ7L015PT1201 |
| RHD4CZ7L015PT1300 |  | Installing for HDPE Pipline 110 mm - (RD-L-15)-Z7-L015-PT | 2d | 2027-04-01 | 2027-04-03 | RHD4PRSHLDOSPT1000, RHD4PRSHLSTAGPT1000, RHD4CZ7L015PT1200, RHD4CZ7L015PT1301 |
| RHD4CZ7L015PT1400 |  | Primary Test for HDPE Pipline 110 mm - (RD-L-15)-Z7-L015-PT | 2d | 2027-04-10 | 2027-04-11 | RHD4CZ7L015PT1300, RHD4CZ7L015PT1401, RHD4CZ7L015PT5100 |
| RHD4CZ7L015PT1500 |  | Backfilling and warning tape works for HDPE Pipline 110 mm - (RD-L-15)-Z7-L015-PT | 2d | 2027-04-14 | 2027-04-15 | RHD4CZ7L015PT1400, RHD4CZ7L015PT1501 |
|  | 6660 | **RHD4-02-002-L015-(PT)-HDPE Pipes - 160 mm diameter** |  | 2027-03-17 | 2027-04-13 |  |
| RHD4CZ7L015PT1101 |  | Excavation works for HDPE Pipline 160 mm - (RD-L-15)-Z7-L015-PT | 4d | 2027-03-17 | 2027-03-21 | RHD4ENSDZ7APPPT130, RHD4ENMSPT2000, RHD4CZ7L015SW2400 |
| RHD4CZ7L015PT1201 |  | Bedding works for HDPE Pipline 160 mm - (RD-L-15)-Z7-L015-PT | 3d | 2027-03-22 | 2027-03-24 | RHD4CZ7L015PT1101 |

| ID | WBS | Task | Duration | Start | Finish | Predecessors |
| --- | --- | --- | --- | --- | --- | --- |
| RHD4CZ7L015PT1301 |  | Installing for HDPE Pipline 160 mm - (RD-L-15)-Z7-L015-PT | 6d | 2027-03-25 | 2027-03-31 | RHD4PRSHLDOSPT1000, RHD4PRSHLSTAGPT1000, RHD4CZ7L015PT1201 |
| RHD4CZ7L015PT1401 |  | Primary Test for HDPE Pipline 160 mm - (RD-L-15)-Z7-L015-PT | 2d | 2027-04-07 | 2027-04-08 | RHD4CZ9L02PT4500, RHD4CZ7L015PT1301, RHD4CZ7L015PT5100 |
| RHD4CZ7L015PT1501 |  | Backfilling and warning tape works for HDPE Pipline 160 mm - (RD-L-15)-Z7-L015-PT | 4d | 2027-04-10 | 2027-04-13 | RHD4CZ7L015PT1401 |
|  | 6664 | **RHD4-02-002-L015-(PT)-Gate Valves (Direct Buried)** |  | 2027-04-01 | 2027-04-18 |  |
| RHD4CZ7L015PT3100 |  | Installation for Direct Buried Gate Valves - (RD-L-15)-Z7-L015-PT | 2d | 2027-04-01 | 2027-04-03 | RHD4PRSHLDOSPT1200, RHD4PRSHLSTAGPT1200, RHD4CZ7L015PT1301 FF, RHD4CZ7L015PT1300 FF, RHD4CZ7L015PT1301 SS, RHD4CZ7L015PT1300 SS |
| RHD4CZ7L015PT3200 |  | Stem and Service box for Direct Buried Gate Valves - (RD-L-15)-Z7-L015-PT | 2d | 2027-04-17 | 2027-04-18 | RHD4PRSHLDOSPT1300, RHD4PRSHLSTAGPT1300, RHD4CZ7L015PT3100, RHD4CZ7L015PT1501, RHD4CZ7L015PT1500 |
|  | 6667 | **RHD4-02-002-L015-(PT)-Wash out Valve Chambers** |  | 2027-04-14 | 2027-04-22 |  |
| RHD4CZ7L015PT2101 |  | Excavation and Bedding for Wash out Valve Chambers for Potable Water Network - (RD-L-15)-Z7-L015-PT | 2d | 2027-04-14 | 2027-04-15 | RHD4ENSDZ7APPPT130, RHD4CZ7L015PT1501 |
| RHD4CZ7L015PT2201 |  | PC works for Wash out Valve Chambers for Potable Water Network - (RD-L-15)-Z7-L015-PT | 2d | 2027-04-17 | 2027-04-18 | RHD4CZ7L015PT2101 |
| RHD4CZ7L015PT2301 |  | Installation for Wash out Valve Chambers for Potable Water Network - (RD-L-15)-Z7-L015-PT | 2d | 2027-04-19 | 2027-04-20 | RHD4PRSHLDOSPT1100, RHD4PRSHLDOSPT1400, RHD4PRSHLSTAGPT1100, RHD4PRSHLSTAGPT1400, RHD4CZ7L015PT2201 |
| RHD4CZ7L015PT2401 |  | Backfilling works for Wash out Valve Chambers for Potable Water Network - (RD-L-15)-Z7-L015-PT | 2d | 2027-04-21 | 2027-04-22 | RHD4CZ7L015PT2301 |
|  | 6668 | **RHD4-02-002-L015-(PT)-Wash out Valves** |  | 2027-04-21 | 2027-04-25 |  |
| RHD4CZ7L015PT3102 |  | Installation for Wash out Valves for Potable Water Network - (RD-L-15)-Z7-L015-PT | 2d | 2027-04-21 | 2027-04-22 | RHD4PRSHLDOSPT1200, RHD4PRSHLSTAGPT1200, RHD4CZ7L015PT2301 |
| RHD4CZ7L015PT3202 |  | Stem and Service box for Wash out Valves for Potable Water Network - (RD-L-15)-Z7-L015-PT | 2d | 2027-04-24 | 2027-04-25 | RHD4PRSHLDOSPT1300, RHD4PRSHLSTAGPT1300, RHD4CZ7L015PT3102, RHD4CZ7L015PT2401 |
|  | 6671 | **RHD4-02-002-L015-(PT)-Fire Hydrant** |  | 2027-04-26 | 2027-05-26 |  |
| RHD4CZ7L015PT4100 |  | Excavation and Bedding and Pipe Installation for Fire Hydrant - (RD-L-15)-Z7-L015-PT | 5d | 2027-04-26 | 2027-05-01 | RHD4ENSDZ7APPPT130, RHD4CZ7L015PT3202, RHD4CZ7L015PT1501, RHD4CZ7L015PT1500 |
| RHD4CZ7L015PT4200 |  | Valve Installation for Fire Hydrant - (RD-L-15)-Z7-L015-PT | 4d | 2027-05-02 | 2027-05-05 | RHD4CZ7L015PT4100 |
| RHD4CZ7L015PT4300 |  | Stem for Fire Hydrant - (RD-L-15)-Z7-L015-PT | 6d | 2027-05-06 | 2027-05-12 | RHD4CZ7L015PT4200 |
| RHD4CZ7L015PT4400 |  | Fire Installation for Fire Hydrant - (RD-L-15)-Z7-L015-PT | 6d | 2027-05-13 | 2027-05-24 | RHD4PRSHLDOSPT1500, RHD4PRSHLSTAGPT1500, RHD4CZ7L015PT4300 |
| RHD4CZ7L015PT4500 |  | Protection Barriers for Fire Hydrant - (RD-L-15)-Z7-L015-PT | 2d | 2027-05-25 | 2027-05-26 | RHD4CZ7L015PT4400 |
|  | 6672 | **RHD4-02-002-L015-(PT)-Concrete Encasement** |  | 2027-04-01 | 2027-04-06 |  |
| RHD4CZ7L015PT5100 |  | Pipe Encasement for Potable Pipelines - (RD-L-15)-Z7-L015-PT | 5d | 2027-04-01 | 2027-04-06 | RHD4CZ7L015PT1301 FF, RHD4CZ7L015PT1300 FF, RHD4CZ7L015PT1301 SS, RHD4CZ7L015PT1300 SS, RHD4CZ7L015PT1201, RHD4CZ7L015PT1200 |
|  | 6673 | **RHD4-02-002-Z7-L015-Irrigation Network - IRR** |  | 2027-03-24 | 2027-05-02 |  |
|  | 6674 | **RHD4-02-002-L015-(IRR)-HDPE Pipes - 160 mm diameter** |  | 2027-03-24 | 2027-04-20 |  |
| RHD4CZ7L015IRR1100 |  | Excavation works for HDPE Pipline 160 mm - (RD-L-15)-Z7-L015-IRR | 6d | 2027-03-24 | 2027-03-30 | RHD4ENSDZ7APPIRR140, RHD4ENMSRR2000, RHD4CZ7L015PT1101, RHD4CZ7L015PT1100 |
| RHD4CZ7L015IRR1200 |  | Bedding works for HDPE Pipline 160 mm - (RD-L-15)-Z7-L015-IRR | 5d | 2027-03-31 | 2027-04-05 | RHD4CZ7L015IRR1100 |
| RHD4CZ7L015IRR1300 |  | Installing for HDPE Pipline 160 mm - (RD-L-15)-Z7-L015-IRR | 6d | 2027-04-06 | 2027-04-12 | RHD4PRSHLDOSIRR1000, RHD4PRSHLSTAGIRR1000, RHD4CZ7L015IRR1200 |
| RHD4CZ7L015IRR1400 |  | Primary Test for HDPE Pipline 160 mm - (RD-L-15)-Z7-L015-IRR | 2d | 2027-04-13 | 2027-04-14 | RHD4CZ7L015IRR1300 |
| RHD4CZ7L015IRR1500 |  | Backfilling and warning tape works for HDPE Pipline 160 mm - (RD-L-15)-Z7-L015-IRR | 5d | 2027-04-15 | 2027-04-20 | RHD4CZ7L015IRR1400 |
|  | 6680 | **RHD4-02-002-L015-(IRR)-HDPE Pipes - 450 mm diameter** |  |  |  |  |
|  | 6682 | **RHD4-02-002-L015-(IRR)-Gate Valves (Direct Buried)** |  | 2027-04-11 | 2027-04-22 |  |
| RHD4CZ7L015IRR3100 |  | Installation for Direct Buried Gate Valves - (RD-L-15)-Z7-L015-IRR | 2d | 2027-04-11 | 2027-04-12 | RHD4PRSHLDOSIRR1100, RHD4PRSHLSTAGIRR1100, RHD4CZ7L015IRR1300 SS, RHD4CZ7L015IRR1300 FF |
| RHD4CZ7L015IRR3200 |  | Stem and Service box for Direct Buried Gate Valves - (RD-L-15)-Z7-L015-IRR | 2d | 2027-04-21 | 2027-04-22 | RHD4PRSHLDOSIRR1300, RHD4PRSHLSTAGIRR1300, RHD4CZ7L015IRR3100, RHD4CZ7L015IRR1500 |
|  | 6685 | **RHD4-02-002-L015-(IRR)-Wash out Chamber** |  | 2027-04-21 | 2027-04-29 |  |
| RHD4CZ7L015IRR2101 |  | Excavation and Bedding for Wash out Chamber for Irrigation Network - (RD-L-15)-Z7-L015-IRR | 2d | 2027-04-21 | 2027-04-22 | RHD4ENSDZ7APPIRR140, RHD4CZ7L015IRR1500 |
| RHD4CZ7L015IRR2201 |  | PC works for Wash out Chamber for Irrigation Network - (RD-L-15)-Z7-L015-IRR | 2d | 2027-04-24 | 2027-04-25 | RHD4CZ7L015IRR2101 |
| RHD4CZ7L015IRR2301 |  | Installation for Wash out Chamber for Irrigation Network - (RD-L-15)-Z7-L015-IRR | 2d | 2027-04-26 | 2027-04-27 | RHD4PRSHLDOSIRR1200, RHD4PRSHLDOSIRR1400, RHD4PRSHLSTAGIRR1200, RHD4PRSHLSTAGIRR1400, RHD4CZ7L015IRR2201 |
| RHD4CZ7L015IRR2401 |  | Backfilling works for Wash out Chamber for Irrigation Network - (RD-L-15)-Z7-L015-IRR | 2d | 2027-04-28 | 2027-04-29 | RHD4CZ7L015IRR2301 |
|  | 6686 | **RHD4-02-002-L015-(IRR)-Wash out Valves** |  | 2027-04-28 | 2027-05-02 |  |
| RHD4CZ7L015IRR3102 |  | Installation for Wash out Valve for Irrigation Network - (RD-L-15)-Z7-L015-IRR | 2d | 2027-04-28 | 2027-04-29 | RHD4CZ4C012RD8100, RHD4PRSHLDOSIRR1100, RHD4PRSHLSTAGIRR1100, RHD4CZ7L015IRR2301, RHD4CZ7L015IRR3200 |
| RHD4CZ7L015IRR3202 |  | Stem and Service box for Wash out Valve for Irrigation Network - (RD-L-15)-Z7-L015-IRR | 2d | 2027-05-01 | 2027-05-02 | RHD4PRSHLDOSIRR1300, RHD4PRSHLSTAGIRR1300, RHD4CZ7L015IRR3102, RHD4CZ7L015IRR2401 |
|  | 6687 | **RHD4-02-002-L015-(IRR)-Air Valve Chamber** |  | 2027-04-21 | 2027-04-29 |  |
| RHD4CZ7L015IRR2102 |  | Excavation and Bedding for Valve Chamber for Irrigation Network - (RD-L-15)-Z7-L015-IRR | 2d | 2027-04-21 | 2027-04-22 | RHD4ENSDZ7APPIRR140, RHD4CZ7L015IRR1500 |
| RHD4CZ7L015IRR2202 |  | PC works for Valve Chamber for Irrigation Network - (RD-L-15)-Z7-L015-IRR | 2d | 2027-04-24 | 2027-04-25 | RHD4CZ7L015IRR2102 |
| RHD4CZ7L015IRR2302 |  | Installation for Valve Chamber for Irrigation Network - (RD-L-15)-Z7-L015-IRR | 2d | 2027-04-26 | 2027-04-27 | RHD4PRSHLDOSIRR1200, RHD4PRSHLDOSIRR1400, RHD4PRSHLSTAGIRR1200, RHD4PRSHLSTAGIRR1400, RHD4CZ7L015IRR2202 |
| RHD4CZ7L015IRR2402 |  | Backfilling works for Valve Chamber for Irrigation Network - (RD-L-15)-Z7-L015-IRR | 2d | 2027-04-28 | 2027-04-29 | RHD4CZ7L015IRR2302 |
|  | 6688 | **RHD4-02-002-L015-(IRR)-Air Valves** |  | 2027-04-28 | 2027-05-02 |  |
| RHD4CZ7L015IRR3103 |  | Installation for Air Valves for Irrigation Network - (RD-L-15)-Z7-L015-IRR | 2d | 2027-04-28 | 2027-04-29 | RHD4PRSHLDOSIRR1100, RHD4PRSHLSTAGIRR1100, RHD4CZ7L015IRR2302 |
| RHD4CZ7L015IRR3203 |  | Stem and Service box for Air Valves for Irrigation Network - (RD-L-15)-Z7-L015-IRR | 2d | 2027-05-01 | 2027-05-02 | RHD4PRSHLDOSIRR1300, RHD4PRSHLSTAGIRR1300, RHD4CZ7L015IRR3103, RHD4CZ7L015IRR2402, RHD4CZ7L015PT3200, RHD4CZ7L015PT3200 FF |
|  | 6707 | **RHD4-02-002-Z7-L015-Medium Voltage Network - MV** |  | 2026-09-13 | 2026-10-25 |  |
|  | 6708 | **RHD4-02-002-L015-(MV)-Medium Voltage cable trench** |  | 2026-09-13 | 2026-10-21 |  |
| RHD4CZ7L015MV1100 |  | Excavation for Medium Voltage Trench - (RD-L-15)-Z7-L015-MV | 14d | 2026-09-13 | 2026-09-29 | RHD4ENSDZ7APPMV150, RHD4CZ7L015RD3100 |
| RHD4CZ7L015MV1200 |  | Trench Backfilling for Medium Voltage Network - (RD-L-15)-Z7-L015-MV | 14d | 2026-10-06 | 2026-10-21 | RHD4CZ7L015MV3200 |
|  | 6709 | **RHD4-02-002-L015-(MV)-Medium Voltage duct banks** |  | 2026-09-13 | 2026-09-27 |  |
| RHD4CZ7L015MV2100 |  | Excavation of Duct Banks for Medium Voltage Network - (RD-L-15)-Z7-L015-MV | 3d | 2026-09-13 | 2026-09-15 | RHD4ENSDZ7APPMV150, RHD4CZ7L015RD3100 |
| RHD4CZ7L015MV2200 |  | Installation of Duct Banks for Medium Voltage Network - (RD-L-15)-Z7-L015-MV | 4d | 2026-09-16 | 2026-09-20 | RHD4PRSHLDOSMV1000, RHD4PRSHLSTAGMV1000, RHD4CZ7L015MV2100 |
| RHD4CZ7L015MV2300 |  | Pouring of Duct Banks for Medium Voltage Network - (RD-L-15)-Z7-L015-MV | 3d | 2026-09-21 | 2026-09-24 | RHD4CZ7L015MV2200 |
| RHD4CZ7L015MV2400 |  | Backfilling of Duct Banks for Medium Voltage Network - (RD-L-15)-Z7-L015-MV | 2d | 2026-09-26 | 2026-09-27 | RHD4CZ7L015MV2300 |
|  | 6710 | **RHD4-02-002-L015-(MV)-Medium Voltage cables 3Cx 500 mm²** |  | 2026-09-30 | 2026-10-25 |  |
| RHD4CZ7L015MV3100 |  | Installation of Medium Voltage Cables 3Cx 500 mm² - (RD-L-15)-Z7-L015-MV | 3d | 2026-09-30 | 2026-10-03 | RHD4PRSHLDOSMV1100, RHD4ENMSMV2000, RHD4ENMSMV2010, RHD4PRSHLSTAGMV1100, RHD4CZ7L015MV1100, RHD4CZ7L015MV2400 |
| RHD4CZ7L015MV3200 |  | Joints Installation of Medium Voltage Cables 3Cx 500 mm² - (RD-L-15)-Z7-L015-MV | 2d | 2026-10-04 | 2026-10-05 | RHD4PRSHLDOSMV1300, RHD4PRSHLSTAGMV1300, RHD4CZ7L015MV3100 |
| RHD4CZ7L015MV3300 |  | Testing of Medium Voltage Cables 3Cx 500 mm² - (RD-L-15)-Z7-L015-MV | 3d | 2026-10-22 | 2026-10-25 | RHD4CZ7L015MV3200, RHD4CZ7L015MV1200 |
|  | 6714 | **RHD4-02-002-Z7-L015-Low Voltage Network - LV** |  | 2027-05-03 | 2027-05-20 |  |
|  | 6715 | **RHD4-02-002-L015-(LV)-Low Voltage duct banks** |  |  |  |  |
|  | 4257 | **RHD4-02-002-L015-(LV)-Low Voltage Drawpit** |  | 2027-05-03 | 2027-05-06 |  |
| RHD4CZ7L015LV5100 |  | Excavation of Drawpit size 900x900x1000mm for Low Voltage Network - (RD-L-15)-Z7-L015-LV | 2d | 2027-05-03 | 2027-05-04 | RHD4CZ7L015MV2100 SS, RHD4CZ7L015MV3300, RHD4CZ7L015IRR3203 |
| RHD4CZ7L015LV5200 |  | Installation of Drawpit size 900x900x1000mm for Low Voltage Network - (RD-L-15)-Z7-L015-LV | 2d | 2027-05-05 | 2027-05-06 | RHD4CZ7L015LV5100 |
|  | 4258 | **RHD4-02-002-L015-(LV)-Low Voltage cables** |  | 2027-05-08 | 2027-05-20 |  |
| RHD4CZ7L015LV3100 |  | Excavation for Low Voltage Cables for Low Voltage Network - (RD-L-15)-Z7-L015-LV | 2d | 2027-05-08 | 2027-05-09 | RHD4CZ7L015LV5200 |
| RHD4CZ7L015LV3200 |  | Cable Laying of Low Voltage Cables for Low Voltage Network - (RD-L-15)-Z7-L015-LV | 2d | 2027-05-10 | 2027-05-11 | RHD4CZ7L015LV3100 |

| ID | WBS | Task | Duration | Start | Finish | Predecessors |
| --- | --- | --- | --- | --- | --- | --- |
| RHD4CZ7L015LV3300 |  | Warning tape and Backfill for Low Voltage Cables for Low Voltage Network - (RD-L-15)-Z7-L015-LV | 2d | 2027-05-12 | 2027-05-13 | RHD4CZ7L015LV3200 |
| RHD4CZ7L015LV3400 |  | Testing of Low Voltage Cables for Low Voltage Network - (RD-L-15)-Z7-L015-LV | 2d | 2027-05-19 | 2027-05-20 | RHD4CZ7L015LV3300, RHD4CZ7L015SW3500, RHD4CZ7L015IRR3202 |
|  | 6720 | **RHD4-02-002-Z7-L015-Street Lighting Network - SL** |  | 2026-09-16 | 2027-07-13 |  |
|  | 6721 | **RHD4-02-002-L015-(SL)-Street Lighting duct banks** |  | 2026-09-16 | 2026-09-30 |  |
| RHD4CZ7L015SL2100 |  | Excavation of Duct Banks for Street Lighting Network - (RD-L-15)-Z7-L015-SL | 3d | 2026-09-16 | 2026-09-19 | RHD4ENSDZ7APPSL170, RHD4CZ7L015MV2100 |
| RHD4CZ7L015SL2200 |  | Installation of Duct Banks for Street Lighting Network - (RD-L-15)-Z7-L015-SL | 4d | 2026-09-20 | 2026-09-24 | RHD4PRSHLDOSSL1000, RHD4PRSHLSTAGSL1000, RHD4CZ7L015SL2100 |
| RHD4CZ7L015SL2300 |  | Pouring of Duct Banks for Street Lighting Network - (RD-L-15)-Z7-L015-SL | 3d | 2026-09-26 | 2026-09-28 | RHD4CZ7L015SL2200 |
| RHD4CZ7L015SL2400 |  | Backfilling of Duct Banks for Street Lighting Network - (RD-L-15)-Z7-L015-SL | 2d | 2026-09-29 | 2026-09-30 | RHD4CZ7L015SL2300 |
|  | 6722 | **RHD4-02-002-L015-(SL)-Street Lighting Drawpit** |  | 2027-05-22 | 2027-05-25 |  |
| RHD4CZ7L015SL5100 |  | Excavation of Drawpit size 600x600x900mm for Street Lighting Network - (RD-L-15)-Z7-L015-SL | 2d | 2027-05-22 | 2027-05-23 | RHD4ENSDZ7APPSL170, RHD4CZ7L015SL2300, RHD4CZ7L015LV3400 |
| RHD4CZ7L015SL5200 |  | Installation of Drawpit size 600x600x900mm for Street Lighting Network - (RD-L-15)-Z7-L015-SL | 2d | 2027-05-24 | 2027-05-25 | RHD4PRSHLDOSSL1400, RHD4PRSHLSTAGSL1400, RHD4CZ7L015SL5100 |
|  | 6723 | **RHD4-02-002-L015-(SL)-Street Lighting cables** |  | 2027-05-26 | 2027-06-16 |  |
| RHD4CZ7L015SL3100 |  | Excavation for Street Lighting Cables for Street Lighting Network - (RD-L-15)-Z7-L015-SL | 6d | 2027-05-26 | 2027-06-01 | RHD4ENSDZ7APPSL170, RHD4CZ7L015SL5200 |
| RHD4CZ7L015SL3200 |  | Cable Laying of Street Lighting Cables for Street Lighting Network - (RD-L-15)-Z7-L015-SL | 5d | 2027-06-02 | 2027-06-07 | RHD4PRSHLDOSSL1100, RHD4ENMSSL2000, RHD4ENMSSL2010, RHD4PRSHLSTAGSL1100, RHD4CZ7L015SL3100 |
| RHD4CZ7L015SL3300 |  | Warning tape and Backfill for Street Lighting Cables for Street Lighting Network - (RD-L-15)-Z7-L015-SL | 5d | 2027-06-08 | 2027-06-13 | RHD4CZ7L015SL3200 |
| RHD4CZ7L015SL3400 |  | Testing of Street Lighting Cables for Street Lighting Network - (RD-L-15)-Z7-L015-SL | 3d | 2027-06-14 | 2027-06-16 | RHD4CZ7L015SL3300 |
|  | 6724 | **RHD4-02-002-L015-(SL)-Street Lighting Poles** |  | 2027-06-17 | 2027-07-13 |  |
| RHD4CZ7L015SL1100 |  | Excavation for RC Base for Lighting Poles for Street Lighting Network - (RD-L-15)-Z7-L015-SL | 4d | 2027-06-17 | 2027-06-21 | RHD4ENSDZ7APPSL170, RHD4CZ7L015SL2400, RHD4CZ7L015SL3400, RHD4CZ7L015PT4500 |
| RHD4CZ7L015SL1200 |  | Installation for RC Base for Lighting Poles for Street Lighting Network - (RD-L-15)-Z7-L015-SL | 4d | 2027-06-22 | 2027-06-26 | RHD4CZ7L015SL1100 |
| RHD4CZ7L015SL1300 |  | Backfill for RC Base for Lighting Poles for Street Lighting Network - (RD-L-15)-Z7-L015-SL | 4d | 2027-06-27 | 2027-06-30 | RHD4CZ7L015SL1200 |
| RHD4CZ7L015SL1400 |  | Installation for Lighting Poles for Street Lighting Network - (RD-L-15)-Z7-L015-SL | 5d | 2027-07-01 | 2027-07-06 | RHD4PRSHLDOSSL1200, RHD4ENMSSL2000, RHD4ENMSSL2010, RHD4PRSHLSTAGSL1200, RHD4CZ7L015SL1300, RHD4CZ7L015SL3400 |
| RHD4CZ7L015SL1500 |  | Luminaire Installation for Lighting Poles for Street Lighting Network - (RD-L-15)-Z7-L015-SL | 4d | 2027-07-10 | 2027-07-13 | RHD4PRSHLDOSSL1300, RHD4PRSHLSTAGSL1300, RHD4CZ7L015SL1400, RHD4CZ7L015SL6100 |
|  | 6726 | **RHD4-02-002-L015-(SL)-Street Lighting Earthing System** |  | 2027-07-07 | 2027-07-08 |  |
| RHD4CZ7L015SL6100 |  | Installation of Earthing for Lighting Poles and Fedder Pillers for Street Lighting Network - (RD-L-15)-Z7-L015-SL | 2d | 2027-07-07 | 2027-07-08 | RHD4ENMSER2000, RHD4ENMSER2010, RHD4CZ7L015SL1400 |
|  | 6732 | **RHD4-02-002-Z7-L015-Telecommunications Network - TC** |  | 2026-09-20 | 2027-08-23 |  |
|  | 6733 | **RHD4-02-002-L015-(TC)-Telecommunications Ducts** |  | 2027-07-14 | 2027-08-23 |  |
| RHD4CZ7L015TC2100 |  | Excavation of HDPE Ducts for Telecom Network - (RD-L-15)-Z7-L015-TC | 10d | 2027-07-14 | 2027-07-25 | RHD4ENSDZ7APPTC190, RHD4CZ7L015TC3400, RHD4CZ7L015SL1500 |
| RHD4CZ7L015TC2200 |  | Installation of HDPE Ducts for Telecom Network - (RD-L-15)-Z7-L015-TC | 15d | 2027-07-26 | 2027-08-11 | RHD4PRSHLDOSTC1000, RHD4PRSHLSTAGTC1000, RHD4CZ7L015TC2100 |
| RHD4CZ7L015TC2400 |  | Backfilling of HDPE Ducts for Telecom Network - (RD-L-15)-Z7-L015-TC | 10d | 2027-08-12 | 2027-08-23 | RHD4CZ7L015TC2200, RHD4CZ7L015TC5200 |
|  | 6734 | **RHD4-02-002-L015-(TC)-Telecommunications Manholes** |  | 2027-07-26 | 2027-08-05 |  |
| RHD4CZ7L015TC5100 |  | Excavation for Manholes for Telecom Network - (RD-L-15)-Z7-L015-TC | 5d | 2027-07-26 | 2027-07-31 | RHD4ENSDZ7APPTC190, RHD4CZ7L015TC2100 |
| RHD4CZ7L015TC5200 |  | Installation of Manholes for Telecom Network - (RD-L-15)-Z7-L015-TC | 5d | 2027-08-01 | 2027-08-05 | RHD4PRSHLDOSTC1200, RHD4PRSHLSTAGTC1200, RHD4CZ7L015TC5100, RHD4CZ7L015TC2200 SS |
|  | 6735 | **RHD4-02-002-L015-(TC)-Telecomminications Road Crossings** |  | 2026-09-20 | 2026-09-29 |  |
| RHD4CZ7L015TC3100 |  | Excavation for Road Crossings for Telecom Network - (RD-L-15)-Z7-L015-TC | 2d | 2026-09-20 | 2026-09-21 | RHD4ENSDZ7APPTC190, RHD4CZ7L015SL2100 |
| RHD4CZ7L015TC3200 |  | Installation of Road Crossings for Telecom Network - (RD-L-15)-Z7-L015-TC | 2d | 2026-09-22 | 2026-09-24 | RHD4PRSHLDOSTC1100, RHD4PRSHLSTAGTC1100, RHD4CZ7L015TC3100 |
| RHD4CZ7L015TC3300 |  | Pouring of Road Crossings for Telecom Network - (RD-L-15)-Z7-L015-TC | 2d | 2026-09-26 | 2026-09-27 | RHD4CZ7L015TC3200 |
| RHD4CZ7L015TC3400 |  | Backfilling of Road Crossings for Telecom Network - (RD-L-15)-Z7-L015-TC | 2d | 2026-09-28 | 2026-09-29 | RHD4CZ7L015TC3300 |
|  | 6736 | **RHD4-02-002-Z7-L015-Information and Communication Technologies - ICT** |  | 2026-09-22 | 2027-09-29 |  |
|  | 6737 | **RHD4-02-002-L015-(ICT)-Information and Communication Technologies Ducts** |  | 2027-08-24 | 2027-09-29 |  |
| RHD4CZ7L015ICT2100 |  | Excavation of HDPE Ducts for ICT Network - (RD-L-15)-Z7-L015-ICT | 9d | 2027-08-24 | 2027-09-02 | RHD4ENSDZ7APPICT200, RHD4CZ7L015ICT3400, RHD4CZ7L015TC2400 |
| RHD4CZ7L015ICT2200 |  | Installation of HDPE Ducts for ICT Network - (RD-L-15)-Z7-L015-ICT | 13d | 2027-09-04 | 2027-09-18 | RHD4PRSHLDOSICT1000, RHD4PRSHLSTAGICT1000, RHD4CZ7L015ICT2100 |
| RHD4CZ7L015ICT2400 |  | Backfilling of HDPE Ducts for ICT Network - (RD-L-15)-Z7-L015-ICT | 9d | 2027-09-19 | 2027-09-29 | RHD4CZ7L015ICT2200, RHD4CZ7L015ICT5200 |
|  | 6738 | **RHD4-02-002-L015-(ICT)-Information and Communication Technologies Manholes** |  | 2027-09-04 | 2027-09-09 |  |
| RHD4CZ7L015ICT5100 |  | Excavation for Manholes for ICT Network - (RD-L-15)-Z7-L015-ICT | 3d | 2027-09-04 | 2027-09-06 | RHD4ENSDZ7APPICT200, RHD4CZ7L015ICT2100 |
| RHD4CZ7L015ICT5200 |  | Installation of Manholes for ICT Network - (RD-L-15)-Z7-L015-ICT | 3d | 2027-09-07 | 2027-09-09 | RHD4PRSHLDOSICT1200, RHD4PRSHLSTAGICT1200, RHD4CZ7L015ICT5100 |
|  | 6739 | **RHD4-02-002-L015-(ICT)-Information and Communication Technologies Road Crossings** |  | 2026-09-22 | 2026-10-01 |  |
| RHD4CZ7L015ICT3100 |  | Excavation for Road Crossings for ICT Network - (RD-L-15)-Z7-L015-ICT | 2d | 2026-09-22 | 2026-09-24 | RHD4ENSDZ7APPICT200, RHD4CZ7L015TC3100 |
| RHD4CZ7L015ICT3200 |  | Installation of Road Crossings for ICT Network - (RD-L-15)-Z7-L015-ICT | 2d | 2026-09-26 | 2026-09-27 | RHD4PRSHLDOSICT1100, RHD4PRSHLSTAGICT1100, RHD4CZ7L015ICT3100 |
| RHD4CZ7L015ICT3300 |  | Pouring of Road Crossings for ICT Network - (RD-L-15)-Z7-L015-ICT | 2d | 2026-09-28 | 2026-09-29 | RHD4CZ7L015ICT3200 |
| RHD4CZ7L015ICT3400 |  | Backfilling of Road Crossings for ICT Network - (RD-L-15)-Z7-L015-ICT | 2d | 2026-09-30 | 2026-10-01 | RHD4CZ7L015ICT3300 |
|  | 6727 | **RHD4-02-002-Z7-L015-Landscape Network - LS** |  |  |  |  |
|  | 6728 | **RHD4-02-002-L015-(LS)-Landscape Lighting cables** |  |  |  |  |
|  | 6729 | **RHD4-02-002-L015-(LS)-Landscape Feeder Pillars** |  |  |  |  |
|  | 6730 | **RHD4-02-002-L015-(LS)-Landscape Bollard Poles** |  |  |  |  |
|  | 6731 | **RHD4-02-002-L015-(LS)-Landscape Feeder Pillars Earthing** |  |  |  |  |
|  | 6740 | **RHD4-02-002-Z7-L015-Security Network - CCTV** |  | 2027-09-30 | 2027-11-08 |  |
|  | 499 | **RHD4-02-002-Z7-L015-(CCTV)-CCTV Poles** |  | 2027-10-06 | 2027-10-17 |  |
| RHD4CZ7L015CCTV1100 |  | Excavation for RC Base for CCTV Poles for Security Network - (RD-L-15)-Z7-L015-CCTV | 2d | 2027-10-06 | 2027-10-07 | RHD4CZ7L015CCTV2100 |
| RHD4CZ7L015CCTV1200 |  | Installation for RC Base for CCTV Poles for Security Network - (RD-L-15)-Z7-L015-CCTV | 2d | 2027-10-09 | 2027-10-10 | RHD4CZ7L015CCTV1100 |
| RHD4CZ7L015CCTV1300 |  | Backfill for RC Base for CCTV Poles for Security Network - (RD-L-15)-Z7-L015-CCTV | 2d | 2027-10-11 | 2027-10-12 | RHD4CZ7L015CCTV1200 |
| RHD4CZ7L015CCTV1400 |  | Installation for CCTV Poles for Security Network - (RD-L-15)-Z7-L015-CCTV | 2d | 2027-10-13 | 2027-10-14 | RHD4CZ7L015CCTV1300 |
| RHD4CZ7L015CCTV1500 |  | Protection post Installation for CCTV Poles for Security Network - (RD-L-15)-Z7-L015-CCTV | 2d | 2027-10-16 | 2027-10-17 | RHD4CZ7L015CCTV1400 |
|  | 501 | **RHD4-02-002-Z7-L015-(CCTV)-Power and Infrastructure** |  | 2027-10-16 | 2027-10-19 |  |
| RHD4CZ7L015CCTV4100 |  | Installation of Power outlet, UPS and midspan for PTZ Camerafor Cameras for Security Network - (RD-L-15)-Z7-L015-CCTV | 2d | 2027-10-16 | 2027-10-17 | RHD4CZ7L015CCTV1400 |
| RHD4CZ7L015CCTV4200 |  | Short Range Wireless PoP wireless Bridgefor CCTV Poles for Security Network - (RD-L-15)-Z7-L015-CCTV | 2d | 2027-10-18 | 2027-10-19 | RHD4CZ7L015CCTV4100 |
|  | 6741 | **RHD4-02-002-Z7-L015-(CCTV)-Civil Works** |  | 2027-09-30 | 2027-10-05 |  |
| RHD4CZ7L015CCTV2100 |  | Civil Works for Security Network - (RD-L-15)-Z7-L015-CCTV | 5d | 2027-09-30 | 2027-10-05 | RHD4CZ7L015ICT2400, RHD4CZ7L015TC2400, RHD4CZ7L015ICT2400 FF |
|  | 500 | **RHD4-02-002-Z7-L015-(CCTV)-Camera** |  | 2027-10-20 | 2027-10-21 |  |
| RHD4CZ7L015CCTV3100 |  | Installation for Cameras for Security Network - (RD-L-15)-Z7-L015-CCTV | 2d | 2027-10-20 | 2027-10-21 | RHD4CZ7L015CCTV1400, RHD4CZ7L015CCTV4100, RHD4CZ7L015CCTV4200 |
|  | 503 | **RHD4-02-002-Z7-L015-(CCTV)-CCTV Panels and Components** |  | 2027-10-23 | 2027-11-08 |  |

| ID | WBS | Task | Duration | Start | Finish | Predecessors |
| --- | --- | --- | --- | --- | --- | --- |
| RHD4CZ7L015CCTV6100 |  | Installation for CCTV Panels for Security Network - (RD-L-15)-Z7-L015-CCTV | 15d | 2027-10-23 | 2027-11-08 | RHD4CZ7L015CCTV4200, RHD4CZ7L015CCTV3100, RHD4CZ7L015CCTV1500 |
|  | 6946 | **RHD4-02-002-Z7-A012** |  | 2026-08-18 | 2027-11-20 |  |
|  | 7021 | **RHD4-02-002-Z7-A012-Crossings Potable Network - PTCr** |  |  |  |  |
|  | 7025 | **RHD4-02-002-A012-(PTCr)-HDPE Pipes - 400 mm diameter** |  |  |  |  |
|  | 7028 | **RHD4-02-002-A012-(PTCr)-Butterfly Valve Chamber** |  |  |  |  |
|  | 7029 | **RHD4-02-002-A012-(PTCr)-Butterfly Valves** |  |  |  |  |
|  | 7034 | **RHD4-02-002-A012-(PTCr)-Fire Hydrant** |  |  |  |  |
|  | 7068 | **RHD4-02-002-Z7-A012-Crossings Irrigation Network - IRRC** |  |  |  |  |
|  | 7072 | **RHD4-02-002-A012-(IRRC)-HDPE Pipes - 250 mm diameter** |  |  |  |  |
|  | 7076 | **RHD4-02-002-A012-(IRRC)-HDPE Pipes - 500 mm diameter** |  |  |  |  |
|  | 7077 | **RHD4-02-002-A012-(IRRC)-Gate Valves (Direct Buried)** |  |  |  |  |
|  | 7078 | **RHD4-02-002-A012-(IRRC)-Butterfly Valve Chamber** |  |  |  |  |
|  | 7079 | **RHD4-02-002-A012-(IRRC)-Butterfly Valves** |  |  |  |  |
|  | 7080 | **RHD4-02-002-A012-(IRRC)-Wash out Chamber** |  |  |  |  |
|  | 7081 | **RHD4-02-002-A012-(IRRC)-Wash out Valves** |  |  |  |  |
|  | 7125 | **RHD4-02-002-Z7-A012-Road Works - RD** |  | 2026-09-01 | 2027-11-20 |  |
|  | 7126 | **RHD4-02-002-A012-(RD)-Subgrade** |  | 2026-09-01 | 2026-09-05 |  |
| RHD4CZ7A012RD1100 |  | Supply, lay and compaction subgrade compacted thickness 300 mm for Roads - (RD-A-1 /2)-Z7-A012-RD | 4d | 2026-09-01 | 2026-09-05 | RHD4ENSDZ7APPEW100, RHD4ENSDZ7APPRD220, RHD4CZ7A012RW3000, RHD4CZ7A012ST1506, RHD4CZ7A012ICT3400, RHD4CZ7A012TC3400, RHD4CZ7A012ST3501 |
|  | 7127 | **RHD4-02-002-A012-(RD)-Aggregate Base Course** |  | 2026-09-06 | 2026-09-09 |  |
| RHD4CZ7A012RD2100 |  | Supply, lay and compaction Aggregate base course compacted thickness 300 mmfor Roads - (RD-A-1 /2)-Z7-A012-RD | 4d | 2026-09-06 | 2026-09-09 | RHD4PRSHLDOSRD1000, RHD4PRSHLSTAGRD1000, RHD4CZ7A012RD1100 |
|  | 7128 | **RHD4-02-002-A012-(RD)-Bituminous base course Two Layers, including (MC1)&(RC2)** |  | 2026-09-10 | 2027-06-08 |  |
| RHD4CZ7A012RD3100 |  | Supply, lay and Asphaltic base course including Prime Coat (MC1) for 1st Layer - (RD-A-1 /2)-Z7-A012-RD | 2d | 2026-09-10 | 2026-09-12 | RHD4PRSHLDOSRD1100, RHD4ENMSASPH2000, RHD4ENMSASPH2010, RHD4PRSHLSTAGRD1100, RHD4CZ7A012RD2100 |
| RHD4CZ7A012RD3200 |  | Supply, lay and Asphaltic base course including Tack Coat (RC2) for 2nd Layer - (RD-A-1 /2)-Z7-A012-RD | 4d | 2027-06-05 | 2027-06-08 | RHD4PRSHLDOSRD1100, RHD4PRSHLSTAGRD1100, RHD4CZ7A012ICT5200 |
|  | 7130 | **RHD4-02-002-A012-(RD)-Precast Concrete Curb** |  | 2027-06-09 | 2027-06-19 |  |
| RHD4CZ7A012RD5100 |  | Supply and installation Precast Concrete Kerb for Roads - (RD-A-1 /2)-Z7-A012-RD | 9d | 2027-06-09 | 2027-06-19 | RHD4PRSHLDOSRD1200, RHD4ENMSRD2000, RHD4ENMSRD2010, RHD4PRSHLSTAGRD1200, RHD4CZ7A012RD3200 |
|  | 7133 | **RHD4-02-002-A012-(RD)-Traffic Signage** |  | 2027-10-25 | 2027-10-31 |  |
| RHD4CZ7A012RD8100 |  | Installation of Traffic Signage for Road Network - (RD-A-1 /2)-Z7-A012-RD | 6d | 2027-10-25 | 2027-10-31 | RHD4PRSHLDOSRD1600, RHD4PRSHLSTAGRD1600, RHD4CZ7A012RD5100, RHD4CZ7L015RD8100, RHD4CZ5A014RD8100 |
|  | 7131 | **RHD4-02-002-A012-(RD)-Precast Interlocking Block Pavers** |  |  |  |  |
|  | 7129 | **RHD4-02-002-A012-(RD)-Bituminous concrete wearing course including tack coat (RC2)** |  | 2027-11-11 | 2027-11-13 |  |
| RHD4CZ7A012RD4100 |  | Supply, lay and compaction Asphaltic wearing course including tack Coat (RC2)for Road Network - (RD-A-1 /2)-Z7-A012-RD | 2d | 2027-11-11 | 2027-11-13 | RHD4CZ7A012RD5100, RHD4CZ7L015RD4100 |
|  | 7132 | **RHD4-02-002-A012-(RD)-Pavement Marking** |  | 2027-11-14 | 2027-11-20 |  |
| RHD4CZ7A012RD7100 |  | Pavement Markings for Road Network - (RD-A-1 /2)-Z7-A012-RD | 6d | 2027-11-14 | 2027-11-20 | RHD4PRSHLDOSRD1500, RHD4PRSHLSTAGRD1500, RHD4CZ7A012RD4100, RHD4CZ7L015RD7100 FF |
|  | 6950 | **RHD4-02-002-Z7-A012-Storm Network - ST** |  | 2026-08-18 | 2027-01-28 |  |
|  | 6967 | **RHD4-02-002-A012-(ST)-MH Works - 1200 mm diameter** |  |  |  |  |
|  | 2039 | **RHD4-02-002-A012-(ST)-GRP Pipes - 1000 mm diameter** |  | 2026-08-18 | 2026-08-31 |  |
| RHD4CZ7A012ST1106 |  | Excavation works for GRP Pipe Line 1000 mm - (RD-A-1 /2)-Z7-A012-ST | 2d | 2026-08-18 | 2026-08-19 | RHD4CZ7L015ST1105 |
| RHD4CZ7A012ST1206 |  | Bedding works for GRP Pipe Line 1000 mm - (RD-A-1 /2)-Z7-A012-ST | 2d | 2026-08-20 | 2026-08-22 | RHD4CZ7A012ST1106 |
| RHD4CZ7A012ST1306 |  | Installing for GRP Pipe Line 1000 mm - (RD-A-1 /2)-Z7-A012-ST | 2d | 2026-08-23 | 2026-08-24 | RHD4CZ7A012ST1206 |
| RHD4CZ7A012ST1406 |  | Primary Test for GRP Pipe Line 1000 mm - (RD-A-1 /2)-Z7-A012-ST | 2d | 2026-08-25 | 2026-08-26 | RHD4CZ7A012ST1306 |
| RHD4CZ7A012ST1506 |  | Backfilling and warning tape works for GRP Pipe Line 1000 mm - (RD-A-1 /2)-Z7-A012-ST | 2d | 2026-08-30 | 2026-08-31 | RHD4CZ7A012ST1406, RHD4CZ7A012ST3501 |
|  | 5254 | **RHD4-02-002-A012-(ST)-GRP Pipes - 900 mm diameter** |  | 2027-01-11 | 2027-01-21 |  |
| RHD4CZ7A012ST1105 |  | Excavation works for GRP Pipe Line 900 mm - (RD-A-1 /2)-Z7-A012-ST | 2d | 2027-01-11 | 2027-01-12 | RHD4CZ7A012ST1106, RHD4CZ7L015ST1104 |
| RHD4CZ7A012ST1205 |  | Bedding works for GRP Pipe Line 900 mm - (RD-A-1 /2)-Z7-A012-ST | 2d | 2027-01-13 | 2027-01-14 | RHD4CZ7A012ST1105 |
| RHD4CZ7A012ST1305 |  | Installing for GRP Pipe Line 900 mm - (RD-A-1 /2)-Z7-A012-ST | 2d | 2027-01-16 | 2027-01-17 | RHD4CZ7A012ST1205 |
| RHD4CZ7A012ST1405 |  | Primary Test for GRP Pipe Line 900 mm - (RD-A-1 /2)-Z7-A012-ST | 2d | 2027-01-18 | 2027-01-19 | RHD4CZ7A012ST1305 |
| RHD4CZ7A012ST1505 |  | Backfilling and warning tape works for GRP Pipe Line 900 mm - (RD-A-1 /2)-Z7-A012-ST | 2d | 2027-01-20 | 2027-01-21 | RHD4CZ7A012ST1405, RHD4CZ7A012ST3501 |
|  | 6576 | **RHD4-02-002-L015-(ST)-GRP Pipes - 700 mm diameter** |  | 2027-01-16 | 2027-01-28 |  |
| RHD4CZ7A012ST1103 |  | Excavation works for GRP Pipe Line 700 mm - (RD-A-1 /2)-Z7-A012-ST | 2d | 2027-01-16 | 2027-01-17 | RHD4CZ7A012ST3201, RHD4CZ7A012ST1104 |
| RHD4CZ7A012ST1203 |  | Bedding works for GRP Pipe Line 700 mm - (RD-A-1 /2)-Z7-A012-ST | 2d | 2027-01-18 | 2027-01-19 | RHD4CZ7A012ST1103 |
| RHD4CZ7A012ST1303 |  | Installing for GRP Pipe Line 700 mm - (RD-A-1 /2)-Z7-A012-ST | 2d | 2027-01-20 | 2027-01-21 | RHD4CZ7A012ST1203, RHD4CZ7A012ST3301 |
| RHD4CZ7A012ST1403 |  | Primary Test for GRP Pipe Line 700 mm - (RD-A-1 /2)-Z7-A012-ST | 2d | 2027-01-23 | 2027-01-24 | RHD4CZ7A012ST1303 |
| RHD4CZ7A012ST1503 |  | Backfilling and warning tape works for GRP Pipe Line 700 mm - (RD-A-1 /2)-Z7-A012-ST | 2d | 2027-01-27 | 2027-01-28 | RHD4CZ7A012ST1403, RHD4CZ7A012ST1504 |
|  | 6590 | **RHD4-02-002-L015-(ST)-MH Works - 1500 mm diameter** |  | 2026-08-18 | 2026-08-29 |  |
| RHD4CZ7A012ST3101 |  | Excavation and PC Blinding works for MH 1500 mm - (RD-A-1 /2)-Z7-A012-ST | 2d | 2026-08-18 | 2026-08-19 | RHD4CZ7A012ST1106 SS |
| RHD4CZ7A012ST3201 |  | Installation of Base for MH 1500 mm - (RD-A-1 /2)-Z7-A012-ST | 2d | 2026-08-20 | 2026-08-22 | RHD4CZ7A012ST3101 |
| RHD4CZ7A012ST3301 |  | MH Ring and C.Slab works and Backfilling works for MH 1500 mm - (RD-A-1 /2)-Z7-A012-ST | 2d | 2026-08-23 | 2026-08-24 | RHD4CZ7A012ST3201 |
| RHD4CZ7A012ST3401 |  | Steel Cover for MH 1500 mm - (RD-A-1 /2)-Z7-A012-ST | 2d | 2026-08-25 | 2026-08-26 | RHD4CZ7A012ST3301 |
| RHD4CZ7A012ST3501 |  | Finishing, Benching, Testing works for MH 1500 mm - (RD-A-1 /2)-Z7-A012-ST | 2d | 2026-08-27 | 2026-08-29 | RHD4CZ7A012ST3401 |
|  | 6024 | **RHD4-02-002-A012-(ST)-MH Works - 2000 mm diameter** |  | 2027-01-13 | 2027-01-24 |  |
| RHD4CZ7A012ST3102 |  | Excavation and PC Blinding works for MH 2000 mm - (RD-A-1 /2)-Z7-A012-ST | 2d | 2027-01-13 | 2027-01-14 | RHD4CZ7A012ST3101, RHD4CZ7A012ST1105 |
| RHD4CZ7A012ST3202 |  | Installation of Base for MH 2000 mm - (RD-A-1 /2)-Z7-A012-ST | 2d | 2027-01-16 | 2027-01-17 | RHD4CZ7A012ST3102 |
| RHD4CZ7A012ST3302 |  | MH Ring and C.Slab works and Backfilling works for MH 2000 mm - (RD-A-1 /2)-Z7-A012-ST | 2d | 2027-01-18 | 2027-01-19 | RHD4CZ7A012ST3202 |
| RHD4CZ7A012ST3402 |  | Steel Cover for MH 2000 mm - (RD-A-1 /2)-Z7-A012-ST | 2d | 2027-01-20 | 2027-01-21 | RHD4CZ7A012ST3302 |
| RHD4CZ7A012ST3502 |  | Finishing, Benching, Testing works for MH 2000 mm - (RD-A-1 /2)-Z7-A012-ST | 2d | 2027-01-23 | 2027-01-24 | RHD4CZ7A012ST3402, RHD4CZ7A012ST3501 |
|  | 6010 | **RHD4-02-002-A012-(ST)-GRP Pipes - 800 mm diameter** |  | 2027-01-13 | 2027-01-26 |  |
| RHD4CZ7A012ST1104 |  | Excavation works for GRP Pipe Line 800 mm - (RD-A-1 /2)-Z7-A012-ST | 2d | 2027-01-13 | 2027-01-14 | RHD4CZ7A012ST1105 |
| RHD4CZ7A012ST1204 |  | Bedding works for GRP Pipe Line 800 mm - (RD-A-1 /2)-Z7-A012-ST | 2d | 2027-01-16 | 2027-01-17 | RHD4CZ7A012ST1104 |
| RHD4CZ7A012ST1304 |  | Installing for GRP Pipe Line 800 mm - (RD-A-1 /2)-Z7-A012-ST | 2d | 2027-01-18 | 2027-01-19 | RHD4CZ7A012ST1204 |
| RHD4CZ7A012ST1404 |  | Primary Test for GRP Pipe Line 800 mm - (RD-A-1 /2)-Z7-A012-ST | 2d | 2027-01-20 | 2027-01-21 | RHD4CZ7A012ST1304 |
| RHD4CZ7A012ST1504 |  | Backfilling and warning tape works for GRP Pipe Line 800 mm - (RD-A-1 /2)-Z7-A012-ST | 2d | 2027-01-25 | 2027-01-26 | RHD4CZ7A012ST1404, RHD4CZ7A012ST1505, RHD4CZ7A012ST1506, RHD4CZ7A012ST3502 |

| ID | WBS | Task | Duration | Start | Finish | Predecessors |
| --- | --- | --- | --- | --- | --- | --- |
|  | 6953 | **RHD4-02-002-A012-(ST)-GRP Pipes - 600 mm diameter** |  |  |  |  |
|  | 6951 | **RHD4-02-002-A012-(ST)-GRP Pipes - 400 mm diameter** |  |  |  |  |
|  | 6966 | **RHD4-02-002-A012-(ST)-UPVC Pipes - 400 mm diameter** |  |  |  |  |
|  | 6965 | **RHD4-02-002-A012-(ST)-UPVC Pipes - 300 mm diameter** |  | 2027-01-18 | 2027-01-28 |  |
| RHD4CZ7A012ST2100 |  | Excavation works for UPVC Pipe Line 300 mm - (RD-A-1 /2)-Z7-A012-ST | 2d | 2027-01-18 | 2027-01-19 | RHD4ENSDZ7APPST110, RHD4CZ7A012ST1103 |
| RHD4CZ7A012ST2200 |  | Bedding works for UPVC Pipe Line 300 mm - (RD-A-1 /2)-Z7-A012-ST | 2d | 2027-01-20 | 2027-01-21 | RHD4CZ7A012ST2100 |
| RHD4CZ7A012ST2300 |  | Installing for UPVC Pipe Line 300 mm - (RD-A-1 /2)-Z7-A012-ST | 2d | 2027-01-23 | 2027-01-24 | RHD4PRSHLDOSST1106, RHD4PRSHLSTAGST1106, RHD4CZ7A012ST2200 |
| RHD4CZ7A012ST2400 |  | Primary Test for UPVC Pipe Line 300 mm - (RD-A-1 /2)-Z7-A012-ST | 2d | 2027-01-25 | 2027-01-26 | RHD4CZ7A012ST2300 |
| RHD4CZ7A012ST2500 |  | Backfilling and warning tape works for UPVC Pipe Line 300 mm - (RD-A-1 /2)-Z7-A012-ST | 2d | 2027-01-27 | 2027-01-28 | RHD4CZ7A012ST2400, RHD4CZ7A012ST6100 |
|  | 6973 | **RHD4-02-002-A012-(ST)-Concrete Encasement** |  | 2027-01-23 | 2027-01-24 |  |
| RHD4CZ7A012ST6100 |  | Pipe Encasement for Storm Pipelines - (RD-A-1 /2)-Z7-A012-ST | 2d | 2027-01-23 | 2027-01-24 | RHD4CZ7A012ST2300 SS, RHD4CZ7A012ST2300 FF, RHD4CZ7A012ST2200 |
|  | 6974 | **RHD4-02-002-Z7-A012-Catch Basin - ST** |  | 2027-01-16 | 2027-01-28 |  |
|  | 6975 | **RHD4-02-002-A012-(ST)-Single Catch Basin Works** |  | 2027-01-16 | 2027-01-27 |  |
| RHD4CZ7A012ST7100 |  | Excavation works for Single Catch Basin - (RD-A-1 /2)-Z7-A012-ST | 2d | 2027-01-16 | 2027-01-17 | RHD4ENSDZ7APPST110, RHD4CZ7A012ST3102 |
| RHD4CZ7A012ST7200 |  | PC Blinding, Installation and Pipe connection for Single Catch Basin - (RD-A-1 /2)-Z7-A012-ST | 2d | 2027-01-18 | 2027-01-19 | RHD4CZ7A012ST7100 |
| RHD4CZ7A012ST7300 |  | Rings & C.Slab & Final Backfill for Single Catch Basin - (RD-A-1 /2)-Z7-A012-ST | 2d | 2027-01-20 | 2027-01-21 | RHD4PRSHLDOSST1306, RHD4PRSHLSTAGST1306, RHD4CZ7A012ST7200 |
| RHD4CZ7A012ST7400 |  | Steel Cover for Single Catch Basin - (RD-A-1 /2)-Z7-A012-ST | 2d | 2027-01-23 | 2027-01-24 | RHD4PRSHLDOSST1706, RHD4CZ7A012ST7300 |
| RHD4CZ7A012ST7500 |  | Finishing and Insulation works for Single Catch Basin - (RD-A-1 /2)-Z7-A012-ST | 3d | 2027-01-25 | 2027-01-27 | RHD4CZ7A012ST7400 |
|  | 6976 | **RHD4-02-002-A012-(ST)-Double Catch Basin Works** |  | 2027-01-18 | 2027-01-28 |  |
| RHD4CZ7A012ST8100 |  | Excavation works for Double Catch Basin - (RD-A-1 /2)-Z7-A012-ST | 2d | 2027-01-18 | 2027-01-19 | RHD4ENSDZ7APPST110, RHD4CZ7A012ST7100 |
| RHD4CZ7A012ST8200 |  | PC Blinding, Installation and Pipe connection for Double Catch Basin - (RD-A-1 /2)-Z7-A012-ST | 2d | 2027-01-20 | 2027-01-21 | RHD4CZ7A012ST8100 |
| RHD4CZ7A012ST8300 |  | Rings & C.Slab & Final Backfillfor Double Catch Basin - (RD-A-1 /2)-Z7-A012-ST | 2d | 2027-01-23 | 2027-01-24 | RHD4PRSHLDOSST1306, RHD4PRSHLSTAGST1306, RHD4CZ7A012ST8200 |
| RHD4CZ7A012ST8400 |  | Steel Cover for Double Catch Basin - (RD-A-1 /2)-Z7-A012-ST | 2d | 2027-01-25 | 2027-01-26 | RHD4PRSHLDOSST1706, RHD4CZ7A012ST8300, RHD4CZ7A012ST7400 |
| RHD4CZ7A012ST8500 |  | Finishing and Insulation works for Double Catch Basin - (RD-A-1 /2)-Z7-A012-ST | 2d | 2027-01-27 | 2027-01-28 | RHD4CZ7A012ST8400 |
|  | 6810 | **RHD4-02-002-Z7-A012-Sewage Network - SW** |  | 2027-01-30 | 2027-03-08 |  |
|  | 6433 | **RHD4-02-002-A012-(SW)-GRP Pipes - 300 mm diameter** |  | 2027-01-30 | 2027-02-09 |  |
| RHD4CZ7A012SW1100 |  | Excavation works for GRP Pipe Line 300 mm - (RD-A-1 /2)-Z7-A012-SW | 2d | 2027-01-30 | 2027-01-31 | RHD4CZ7A012ST2500 |
| RHD4CZ7A012SW1200 |  | Bedding works for GRP Pipe Line 300 mm - (RD-A-1 /2)-Z7-A012-SW | 2d | 2027-02-01 | 2027-02-02 | RHD4CZ7A012SW1100 |
| RHD4CZ7A012SW1300 |  | Installing for GRP Pipe Line 300 mm - (RD-A-1 /2)-Z7-A012-SW | 2d | 2027-02-03 | 2027-02-04 | RHD4CZ7A012SW1200 |
| RHD4CZ7A012SW1400 |  | Primary Test for GRP Pipe Line 300 mm - (RD-A-1 /2)-Z7-A012-SW | 2d | 2027-02-06 | 2027-02-07 | RHD4CZ7A012SW1300 |
| RHD4CZ7A012SW1500 |  | Backfilling and warning tape works for GRP Pipe Line 300 mm - (RD-A-1 /2)-Z7-A012-SW | 2d | 2027-02-08 | 2027-02-09 | RHD4CZ7A012SW1400 |
|  | 6442 | **RHD4-02-002-A012-(SW)-MH Works - 1200 mm diameter** |  | 2027-02-01 | 2027-03-08 |  |
| RHD4CZ7A012SW3100 |  | Excavation and PC Blinding works for MH 1200 mm - (RD-A-1 /2)-Z7-A012-SW | 6d | 2027-02-01 | 2027-02-07 | RHD4CZ7A012SW1100 |
| RHD4CZ7A012SW3200 |  | Installation of Base for MH 1200 mm - (RD-A-1 /2)-Z7-A012-SW | 7d | 2027-02-08 | 2027-02-15 | RHD4CZ7A012SW3100 |
| RHD4CZ7A012SW3300 |  | MH Ring and C.Slab works and Backfilling works for MH 1200 mm - (RD-A-1 /2)-Z7-A012-SW | 7d | 2027-02-16 | 2027-02-24 | RHD4CZ7A012SW3200 |
| RHD4CZ7A012SW3400 |  | Steel Cover for MH 1200 mm - (RD-A-1 /2)-Z7-A012-SW | 3d | 2027-02-25 | 2027-02-28 | RHD4CZ7A012SW3300 |
| RHD4CZ7A012SW3500 |  | Finishing, Benching, Testing works for MH 1200 mm - (RD-A-1 /2)-Z7-A012-SW | 7d | 2027-03-01 | 2027-03-08 | RHD4CZ7A012SW3400, RHD4CZ7A012ST1503 |
|  | 6434 | **RHD4-02-002-A012-(SW)-GRP Pipes - 400 mm diameter** |  | 2027-02-08 | 2027-03-03 |  |
| RHD4CZ7A012SW1101 |  | Excavation works for GRP Pipe Line 400 mm - (RD-A-1 /2)-Z7-A012-SW | 2d | 2027-02-08 | 2027-02-09 | RHD4CZ7A012SW3100 |
| RHD4CZ7A012SW1201 |  | Bedding works for GRP Pipe Line 400 mm - (RD-A-1 /2)-Z7-A012-SW | 2d | 2027-02-10 | 2027-02-11 | RHD4CZ7A012SW1101 |
| RHD4CZ7A012SW1301 |  | Installing for GRP Pipe Line 400 mm - (RD-A-1 /2)-Z7-A012-SW | 2d | 2027-02-25 | 2027-02-27 | RHD4CZ7A012SW1201, RHD4CZ7A012SW3300 |
| RHD4CZ7A012SW1401 |  | Primary Test for GRP Pipe Line 400 mm - (RD-A-1 /2)-Z7-A012-SW | 2d | 2027-02-28 | 2027-03-01 | RHD4CZ7A012SW1301 |
| RHD4CZ7A012SW1501 |  | Backfilling and warning tape works for GRP Pipe Line 400 mm - (RD-A-1 /2)-Z7-A012-SW | 2d | 2027-03-02 | 2027-03-03 | RHD4CZ7A012SW1401, RHD4CZ7A012SW1500 |
|  | 6438 | **RHD4-02-002-A012-(SW)-UPVC Pipes - 200 mm diameter** |  | 2027-02-10 | 2027-02-21 |  |
| RHD4CZ7A012SW2100 |  | Excavation works for UPVC Pipe Line 200 mm - (RD-A-1 /2)-Z7-A012-SW | 2d | 2027-02-10 | 2027-02-11 | RHD4CZ7A012SW1101 |
| RHD4CZ7A012SW2200 |  | Bedding works for UPVC Pipe Line 200 mm - (RD-A-1 /2)-Z7-A012-SW | 2d | 2027-02-13 | 2027-02-14 | RHD4CZ7A012SW2100 |
| RHD4CZ7A012SW2300 |  | Installing for UPVC Pipe Line 200 mm - (RD-A-1 /2)-Z7-A012-SW | 2d | 2027-02-15 | 2027-02-16 | RHD4CZ7A012SW2200 |
| RHD4CZ7A012SW2400 |  | Primary Test for UPVC Pipe Line 200 mm - (RD-A-1 /2)-Z7-A012-SW | 2d | 2027-02-17 | 2027-02-18 | RHD4CZ7A012SW2300 |
| RHD4CZ7A012SW2500 |  | Backfilling and warning tape works for UPVC Pipe Line 200 mm - (RD-A-1 /2)-Z7-A012-SW | 2d | 2027-02-20 | 2027-02-21 | RHD4CZ7A012SW2400 |
|  | 7036 | **RHD4-02-002-Z7-A012-Potable Network - PT** |  | 2027-02-23 | 2027-03-27 |  |
|  | 7040 | **RHD4-02-002-A012-(PT)-HDPE Pipes - 400 mm diameter** |  | 2027-02-23 | 2027-03-15 |  |
| RHD4CZ7A012PT1103 |  | Excavation works for HDPE Pipline 400 mm - (RD-A-1 /2)-Z7-A012-PT | 3d | 2027-02-23 | 2027-02-25 | RHD4ENSDZ7APPPT130, RHD4ENMSPT2000, RHD4CZ7A012SW2500 |
| RHD4CZ7A012PT1203 |  | Bedding works for HDPE Pipline 400 mm - (RD-A-1 /2)-Z7-A012-PT | 3d | 2027-02-27 | 2027-03-01 | RHD4CZ7A012PT1103 |
| RHD4CZ7A012PT1303 |  | Installing for HDPE Pipline 400 mm - (RD-A-1 /2)-Z7-A012-PT | 4d | 2027-03-02 | 2027-03-06 | RHD4PRSHLDOSPT1000, RHD4PRSHLSTAGPT1000, RHD4CZ7A012PT1203 |
| RHD4CZ7A012PT1403 |  | Primary Test for HDPE Pipline 400 mm - (RD-A-1 /2)-Z7-A012-PT | 2d | 2027-03-07 | 2027-03-08 | RHD4CZ7A012PT1303, RHD4CZ7A012PT5100 |
| RHD4CZ7A012PT1503 |  | Backfilling and warning tape works for HDPE Pipline 400 mm - (RD-A-1 /2)-Z7-A012-PT | 3d | 2027-03-13 | 2027-03-15 | RHD4CZ7A012PT1403 |
|  | 7043 | **RHD4-02-002-A012-(PT)-Butterfly Valve Chamber** |  | 2027-03-16 | 2027-03-24 |  |
| RHD4CZ7A012PT2100 |  | Excavation and Bedding for Butterfly Valve Chamber for Potable Water Network - (RD-A-1 /2)-Z7-A012-PT | 2d | 2027-03-16 | 2027-03-17 | RHD4ENSDZ7APPPT130, RHD4CZ7A012PT1503 |
| RHD4CZ7A012PT2200 |  | PC works for Butterfly Valve Chamber for Potable Water Network - (RD-A-1 /2)-Z7-A012-PT | 2d | 2027-03-18 | 2027-03-20 | RHD4CZ7A012PT2100 |
| RHD4CZ7A012PT2300 |  | Installation for Butterfly Valve Chamber for Potable Water Network - (RD-A-1 /2)-Z7-A012-PT | 2d | 2027-03-21 | 2027-03-22 | RHD4PRSHLDOSPT1100, RHD4PRSHLDOSPT1400, RHD4PRSHLSTAGPT1100, RHD4PRSHLSTAGPT1400, RHD4CZ7A012PT2200 |
| RHD4CZ7A012PT2400 |  | Backfilling works for Butterfly Valve Chamber for Potable Water Network - (RD-A-1 /2)-Z7-A012-PT | 2d | 2027-03-23 | 2027-03-24 | RHD4CZ7A012PT2300 |
|  | 7044 | **RHD4-02-002-A012-(PT)-Butterfly Valves** |  | 2027-03-23 | 2027-03-27 |  |
| RHD4CZ7A012PT3101 |  | Installation for Butterfly Valves for Potable Water Network - (RD-A-1 /2)-Z7-A012-PT | 2d | 2027-03-23 | 2027-03-24 | RHD4PRSHLDOSPT1200, RHD4PRSHLSTAGPT1200, RHD4CZ7A012PT2300 |
| RHD4CZ7A012PT3201 |  | Stem and Service box for Butterfly Valves for Potable Water Network - (RD-A-1 /2)-Z7-A012-PT | 2d | 2027-03-25 | 2027-03-27 | RHD4PRSHLDOSPT1300, RHD4PRSHLSTAGPT1300, RHD4CZ7A012PT3101, RHD4CZ7A012PT2400 |
|  | 7049 | **RHD4-02-002-A012-(PT)-Fire Hydrant** |  | 2027-03-16 | 2027-03-27 |  |
| RHD4CZ7A012PT4100 |  | Excavation and Bedding and Pipe Installation for Fire Hydrant - (RD-A-1 /2)-Z7-A012-PT | 2d | 2027-03-16 | 2027-03-17 | RHD4ENSDZ7APPPT130, RHD4CZ7A012PT1503 |
| RHD4CZ7A012PT4200 |  | Valve Installation for Fire Hydrant - (RD-A-1 /2)-Z7-A012-PT | 2d | 2027-03-18 | 2027-03-20 | RHD4CZ7A012PT4100 |
| RHD4CZ7A012PT4300 |  | Stem for Fire Hydrant - (RD-A-1 /2)-Z7-A012-PT | 2d | 2027-03-21 | 2027-03-22 | RHD4CZ7A012PT4200 |
| RHD4CZ7A012PT4400 |  | Fire Installation for Fire Hydrant - (RD-A-1 /2)-Z7-A012-PT | 2d | 2027-03-23 | 2027-03-24 | RHD4PRSHLDOSPT1500, RHD4PRSHLSTAGPT1500, RHD4CZ7A012PT4300 |
| RHD4CZ7A012PT4500 |  | Protection Barriers for Fire Hydrant - (RD-A-1 /2)-Z7-A012-PT | 2d | 2027-03-25 | 2027-03-27 | RHD4CZ7A012PT4400 |

| ID | WBS | Task | Duration | Start | Finish | Predecessors |
| --- | --- | --- | --- | --- | --- | --- |
|  | 7050 | **RHD4-02-002-A012-(PT)-Concrete Encasement** |  | 2027-03-02 | 2027-03-06 |  |
| RHD4CZ7A012PT5100 |  | Pipe Encasement for Potable Pipelines - (RD-A-1 /2)-Z7-A012-PT | 4d | 2027-03-02 | 2027-03-06 | RHD4CZ7A012PT1303 FF, RHD4CZ7A012PT1303 SS, RHD4CZ7A012PT1203 |
|  | 7051 | **RHD4-02-002-Z7-A012-Irrigation Network - IRR** |  | 2027-02-23 | 2027-04-07 |  |
|  | 7055 | **RHD4-02-002-A012-(IRR)-HDPE Pipes - 250 mm diameter** |  | 2027-02-23 | 2027-03-06 |  |
| RHD4CZ7A012IRR1103 |  | Excavation works for HDPE Pipline 250 mm - (RD-A-1 /2)-Z7-A012-IRR | 2d | 2027-02-23 | 2027-02-24 | RHD4ENSDZ7APPIRR140, RHD4ENMSRR2000, RHD4CZ7A012SW2500 |
| RHD4CZ7A012IRR1203 |  | Bedding works for HDPE Pipline 250 mm - (RD-A-1 /2)-Z7-A012-IRR | 2d | 2027-02-25 | 2027-02-27 | RHD4CZ7A012IRR1103 |
| RHD4CZ7A012IRR1303 |  | Installing for HDPE Pipline 250 mm - (RD-A-1 /2)-Z7-A012-IRR | 2d | 2027-02-28 | 2027-03-01 | RHD4PRSHLDOSIRR1000, RHD4PRSHLSTAGIRR1000, RHD4CZ7A012IRR1203 |
| RHD4CZ7A012IRR1403 |  | Primary Test for HDPE Pipline 250 mm - (RD-A-1 /2)-Z7-A012-IRR | 2d | 2027-03-02 | 2027-03-03 | RHD4CZ7A012IRR1303 |
| RHD4CZ7A012IRR1503 |  | Backfilling and warning tape works for HDPE Pipline 250 mm - (RD-A-1 /2)-Z7-A012-IRR | 2d | 2027-03-04 | 2027-03-06 | RHD4CZ7A012IRR1403 |
|  | 6115 | **RHD4-02-002-A012-(IRR)-Gate Valves (Direct Buried)** |  | 2027-03-06 | 2027-03-13 |  |
| RHD4CZ7A012IRR3100 |  | Installation for Direct Buried Gate Valves - (RD-A-1 /2)-Z7-A012-IRR | 2d | 2027-03-06 | 2027-03-07 | RHD4CZ7A012IRR1304 SS, RHD4CZ7A012IRR1304 FF, RHD4CZ7A012IRR1104 |
| RHD4CZ7A012IRR3200 |  | Stem and Service box for Direct Buried Gate Valves - (RD-A-1 /2)-Z7-A012-IRR | 2d | 2027-03-08 | 2027-03-13 | RHD4CZ7A012IRR3100 |
|  | 8762 | **RHD4-02-002-A012-(IRR)-HDPE Pipes - 500 mm diameter** |  | 2027-02-25 | 2027-03-16 |  |
| RHD4CZ7A012IRR1107 |  | Excavation works for HDPE Pipline 500 mm - (RD-A-1 /2)-Z7-A012-IRR | 3d | 2027-02-25 | 2027-02-28 | RHD4CZ7A012IRR1103 |
| RHD4CZ7A012IRR1207 |  | Bedding works for HDPE Pipline 500 mm - (RD-A-1 /2)-Z7-A012-IRR | 3d | 2027-03-01 | 2027-03-03 | RHD4CZ7A012IRR1107 |
| RHD4CZ7A012IRR1307 |  | Installing for HDPE Pipline 500 mm - (RD-A-1 /2)-Z7-A012-IRR | 3d | 2027-03-04 | 2027-03-07 | RHD4CZ7A012IRR1207 |
| RHD4CZ7A012IRR1407 |  | Primary Test for HDPE Pipline 500 mm - (RD-A-1 /2)-Z7-A012-IRR | 2d | 2027-03-08 | 2027-03-13 | RHD4CZ7A012IRR1307 |
| RHD4CZ7A012IRR1507 |  | Backfilling and warning tape works for HDPE Pipline 500 mm - (RD-A-1 /2)-Z7-A012-IRR | 3d | 2027-03-14 | 2027-03-16 | RHD4CZ7A012IRR1407, RHD4CZ7A012IRR3200 |
|  | 6111 | **RHD4-02-002-A012-(IRR)-HDPE Pipes - 315 mm diameter** |  | 2027-03-01 | 2027-03-15 |  |
| RHD4CZ7A012IRR1104 |  | Excavation works for HDPE Pipline 315 mm - (RD-A-1 /2)-Z7-A012-IRR | 2d | 2027-03-01 | 2027-03-02 | RHD4CZ7A012IRR1107 |
| RHD4CZ7A012IRR1204 |  | Bedding works for HDPE Pipline 315 mm - (RD-A-1 /2)-Z7-A012-IRR | 2d | 2027-03-03 | 2027-03-04 | RHD4CZ7A012IRR1104 |
| RHD4CZ7A012IRR1304 |  | Installing for HDPE Pipline 315 mm - (RD-A-1 /2)-Z7-A012-IRR | 2d | 2027-03-06 | 2027-03-07 | RHD4CZ7A012IRR1204 |
| RHD4CZ7A012IRR1404 |  | Primary Test for HDPE Pipline 315 mm - (RD-A-1 /2)-Z7-A012-IRR | 2d | 2027-03-08 | 2027-03-13 | RHD4CZ7A012IRR1304 |
| RHD4CZ7A012IRR1504 |  | Backfilling and warning tape works for HDPE Pipline 315 mm - (RD-A-1 /2)-Z7-A012-IRR | 2d | 2027-03-14 | 2027-03-15 | RHD4CZ7A012IRR1404 |
|  | 6116 | **RHD4-02-002-A012-(IRR)-Butterfly Valve Chamber** |  | 2027-03-16 | 2027-03-24 |  |
| RHD4CZ7A012IRR2100 |  | Excavation and Bedding for Butterfly Valve Chamber for Irrigation Network - (RD-A-1 /2)-Z7-A012-IRR | 2d | 2027-03-16 | 2027-03-17 | RHD4CZ7A012IRR1504, RHD4CZ7A012IRR3100 |
| RHD4CZ7A012IRR2200 |  | PC works for Butterfly Valve Chamber for Irrigation Network - (RD-A-1 /2)-Z7-A012-IRR | 2d | 2027-03-18 | 2027-03-20 | RHD4CZ7A012IRR2100 |
| RHD4CZ7A012IRR2300 |  | Installation for Butterfly Valve Chamber for Irrigation Network - (RD-A-1 /2)-Z7-A012-IRR | 2d | 2027-03-21 | 2027-03-22 | RHD4CZ7A012IRR2200 |
| RHD4CZ7A012IRR2400 |  | Backfilling works for Butterfly Valve Chamber for Irrigation Network - (RD-A-1 /2)-Z7-A012-IRR | 2d | 2027-03-23 | 2027-03-24 | RHD4CZ7A012IRR2300 |
|  | 6117 | **RHD4-02-002-A012-(IRR)-Butterfly Valves** |  | 2027-03-23 | 2027-03-27 |  |
| RHD4CZ7A012IRR3101 |  | Installation for Butterfly Valves for Irrigation Network - (RD-A-1 /2)-Z7-A012-IRR | 2d | 2027-03-23 | 2027-03-24 | RHD4CZ7A012IRR2300, RHD4CZ7A012IRR2100 |
| RHD4CZ7A012IRR3201 |  | Stem and Service box for Butterfly Valves for Irrigation Network - (RD-A-1 /2)-Z7-A012-IRR | 2d | 2027-03-25 | 2027-03-27 | RHD4CZ7A012IRR3101, RHD4CZ7A012IRR2400, RHD4CZ7A012IRR1507 |
|  | 6685 | **RHD4-02-002-A012-(IRR)-Wash out Chamber** |  | 2027-03-25 | 2027-04-03 |  |
| RHD4CZ7A012IRR2101 |  | Excavation and Bedding for Wash out Chamber for Irrigation Network - (RD-A-1 /2)-Z7-A012-IRR | 2d | 2027-03-25 | 2027-03-27 | RHD4CZ7A012IRR3101 |
| RHD4CZ7A012IRR2201 |  | PC works for Wash out Chamber for Irrigation Network - (RD-A-1 /2)-Z7-A012-IRR | 2d | 2027-03-28 | 2027-03-29 | RHD4CZ7A012IRR2101 |
| RHD4CZ7A012IRR2301 |  | Installation for Wash out Chamber for Irrigation Network - (RD-A-1 /2)-Z7-A012-IRR | 2d | 2027-03-30 | 2027-03-31 | RHD4CZ7A012IRR2201 |
| RHD4CZ7A012IRR2401 |  | Backfilling works for Wash out Chamber for Irrigation Network - (RD-A-1 /2)-Z7-A012-IRR | 2d | 2027-04-01 | 2027-04-03 | RHD4CZ7A012IRR2301 |
|  | 6686 | **RHD4-02-002-A012-(IRR)-Wash out Valves** |  | 2027-04-01 | 2027-04-05 |  |
| RHD4CZ7A012IRR3102 |  | Installation for Wash out Valve for Irrigation Network - (RD-A-1 /2)-Z7-A012-IRR | 2d | 2027-04-01 | 2027-04-03 | RHD4CZ7A012IRR2301, RHD4CZ7A012IRR2101 |
| RHD4CZ7A012IRR3202 |  | Stem and Service box for Wash out Valve for Irrigation Network - (RD-A-1 /2)-Z7-A012-IRR | 2d | 2027-04-04 | 2027-04-05 | RHD4CZ7A012IRR3102, RHD4CZ7A012IRR2401, RHD4CZ7A012IRR3201, RHD4CZ7A012SW1501 |
|  | 1771 | **RHD4-02-002-A012-(IRR)-Concrete Encasement** |  | 2027-04-04 | 2027-04-07 |  |
| RHD4CZ7A012IRR5100 |  | Pipe Encasement for Irrigation Pipelines - (RD-A-1 /2)-Z7-A012-IRR | 4d | 2027-04-04 | 2027-04-07 | RHD4CZ7A012IRR3102 |
|  | 7085 | **RHD4-02-002-Z7-A012-Medium Voltage Network - MV** |  | 2026-09-13 | 2027-02-10 |  |
|  | 7088 | **RHD4-02-002-A012-(MV)-Medium Voltage cables 3Cx 500 mm²** |  | 2026-12-29 | 2027-01-23 |  |
| RHD4CZ7A012MV3100 |  | Installation of Medium Voltage Cables 3Cx 500 mm² - (RD-A-1 /2)-Z7-A012-MV | 9d | 2026-12-29 | 2027-01-07 | RHD4PRSHLDOSMV1100, RHD4ENMSMV2000, RHD4ENMSMV2010, RHD4PRSHLSTAGMV1100, RHD4CZ7A012MV1100 |
| RHD4CZ7A012MV3200 |  | Joints Installation of Medium Voltage Cables 3Cx 500 mm² - (RD-A-1 /2)-Z7-A012-MV | 4d | 2027-01-09 | 2027-01-12 | RHD4PRSHLDOSMV1300, RHD4PRSHLSTAGMV1300, RHD4CZ7A012MV3100 |
| RHD4CZ7A012MV3300 |  | Testing of Medium Voltage Cables 3Cx 500 mm² - (RD-A-1 /2)-Z7-A012-MV | 9d | 2027-01-13 | 2027-01-23 | RHD4CZ7A012MV3200 |
|  | 1793 | **RHD4-02-002-A012-(MV)-Medium Voltage cables 3Cx 50 mm²** |  | 2027-01-24 | 2027-01-25 |  |
| RHD4CZ7A012MV3401 |  | Termination of Medium Voltage Cables 3Cx 50 mm² - (RD-A-1 /2)-Z7-A012-MV | 2d | 2027-01-24 | 2027-01-25 | RHD4CZ7A012MV3300 |
|  | 1794 | **RHD4-02-002-A012-(MV)-Normally open Point (Outdoor Type)** |  | 2027-01-26 | 2027-01-30 |  |
| RHD4CZ7A012MV4100 |  | Installation for Normally open Point - (RD-A-1 /2)-Z7-A012-MV | 2d | 2027-01-26 | 2027-01-27 | RHD4CZ7A012MV3401 |
| RHD4CZ7A012MV4200 |  | Termination for Normally open Point - (RD-A-1 /2)-Z7-A012-MV | 2d | 2027-01-28 | 2027-01-30 | RHD4CZ7A012MV4100 |
|  | 1791 | **RHD4-02-002-A012-(MV)-Medium Voltage duct banks** |  | 2026-09-13 | 2026-10-07 |  |
| RHD4CZ7A012MV2100 |  | Excavation of Duct Banks for Medium Voltage Network - (RD-A-1 /2)-Z7-A012-MV | 5d | 2026-09-13 | 2026-09-17 | RHD4CZ7A012RD3100 |
| RHD4CZ7A012MV2200 |  | Installation of Duct Banks for Medium Voltage Network - (RD-A-1 /2)-Z7-A012-MV | 7d | 2026-09-19 | 2026-09-27 | RHD4CZ7A012MV2100 |
| RHD4CZ7A012MV2300 |  | Pouring of Duct Banks for Medium Voltage Network - (RD-A-1 /2)-Z7-A012-MV | 5d | 2026-09-28 | 2026-10-03 | RHD4CZ7A012MV2200 |
| RHD4CZ7A012MV2400 |  | Backfilling of Duct Banks for Medium Voltage Network - (RD-A-1 /2)-Z7-A012-MV | 4d | 2026-10-04 | 2026-10-07 | RHD4CZ7A012MV2300 |
|  | 7086 | **RHD4-02-002-A012-(MV)-Medium Voltage cable trench** |  | 2026-12-17 | 2027-02-10 |  |
| RHD4CZ7A012MV1100 |  | Excavation for Medium Voltage Trench - (RD-A-1 /2)-Z7-A012-MV | 10d | 2026-12-17 | 2026-12-28 | RHD4ENSDZ7APPMV150, RHD4CZ7A012RD3100, RHD4CZ7L03LV5100 |
| RHD4CZ7A012MV1200 |  | Trench Backfilling for Medium Voltage Network - (RD-A-1 /2)-Z7-A012-MV | 10d | 2027-01-31 | 2027-02-10 | RHD4CZ7A012MV4200 |
|  | 7092 | **RHD4-02-002-Z7-A012-Low Voltage Network - LV** |  | 2026-10-08 | 2027-03-02 |  |
|  | 7093 | **RHD4-02-002-A012-(LV)-Low Voltage duct banks** |  | 2026-10-08 | 2026-11-02 |  |
| RHD4CZ7A012LV2100 |  | Excavation of Duct Banks for Low Voltage Network - (RD-A-1 /2)-Z7-A012-LV | 5d | 2026-10-08 | 2026-10-13 | RHD4ENSDZ7APPLV160, RHD4CZ7A012RW3000, RHD4CZ7A012MV2100, RHD4CZ7A012MV2400 |
| RHD4CZ7A012LV2200 |  | Installation of Duct Banks for Low Voltage Network - (RD-A-1 /2)-Z7-A012-LV | 8d | 2026-10-14 | 2026-10-22 | RHD4PRSHLDOSLV1000, RHD4PRSHLSTAGLV1000, RHD4CZ7A012LV2100 |
| RHD4CZ7A012LV2300 |  | Pouring of Duct Banks for Low Voltage Network - (RD-A-1 /2)-Z7-A012-LV | 5d | 2026-10-24 | 2026-10-28 | RHD4CZ7A012LV2200 |
| RHD4CZ7A012LV2400 |  | Backfilling of Duct Banks for Low Voltage Network - (RD-A-1 /2)-Z7-A012-LV | 4d | 2026-10-29 | 2026-11-02 | RHD4CZ7A012LV2300 |
|  | 7094 | **RHD4-02-002-A012-(LV)-Low Voltage Drawpit** |  | 2027-02-11 | 2027-02-15 |  |
| RHD4CZ7A012LV5100 |  | Excavation of Drawpit size 900x900x1000mm for Low Voltage Network - (RD-A-1 /2)-Z7-A012-LV | 2d | 2027-02-11 | 2027-02-13 | RHD4ENSDZ7APPLV160, RHD4CZ7A012LV2300, RHD4CZ7A012MV1200 |
| RHD4CZ7A012LV5200 |  | Installation of Drawpit size 900x900x1000mm for Low Voltage Network - (RD-A-1 /2)-Z7-A012-LV | 2d | 2027-02-14 | 2027-02-15 | RHD4PRSHLDOSLV1400, RHD4PRSHLSTAGLV1400, RHD4CZ7A012LV5100 |
|  | 7095 | **RHD4-02-002-A012-(LV)-Low Voltage cables** |  | 2027-02-16 | 2027-03-02 |  |

| ID | WBS | Task | Duration | Start | Finish | Predecessors |
| --- | --- | --- | --- | --- | --- | --- |
| RHD4CZ7A012LV3100 |  | Excavation for Low Voltage Cables for Low Voltage Network - (RD-A-1 /2)-Z7-A012-LV | 4d | 2027-02-16 | 2027-02-20 | RHD4ENSDZ7APPLV160, RHD4CZ7A012LV2400, RHD4CZ7A012LV5200 |
| RHD4CZ7A012LV3200 |  | Cable Laying of Low Voltage Cables for Low Voltage Network - (RD-A-1 /2)-Z7-A012-LV | 3d | 2027-02-21 | 2027-02-24 | RHD4PRSHLDOSLV1100, RHD4ENMSLV2000, RHD4ENMSLV2010, RHD4PRSHLSTAGLV1100, RHD4CZ7A012LV3100 |
| RHD4CZ7A012LV3300 |  | Warning tape and Backfill for Low Voltage Cables for Low Voltage Network - (RD-A-1 /2)-Z7-A012-LV | 3d | 2027-02-25 | 2027-02-28 | RHD4CZ7A012LV3200 |
| RHD4CZ7A012LV3400 |  | Testing of Low Voltage Cables for Low Voltage Network - (RD-A-1 /2)-Z7-A012-LV | 2d | 2027-03-01 | 2027-03-02 | RHD4CZ7A012LV3300 |
|  | 7098 | **RHD4-02-002-Z7-A012-Street Lighting Network - SL** |  | 2027-03-03 | 2027-03-31 |  |
|  | 7099 | **RHD4-02-002-A012-(SL)-Street Lighting duct banks** |  |  |  |  |
|  | 7100 | **RHD4-02-002-A012-(SL)-Street Lighting Drawpit** |  | 2027-03-03 | 2027-03-07 |  |
| RHD4CZ7A012SL5100 |  | Excavation of Drawpit size 600x600x900mm for Street Lighting Network - (RD-A-1 /2)-Z7-A012-SL | 2d | 2027-03-03 | 2027-03-04 | RHD4ENSDZ7APPSL170, RHD4CZ7A012LV3400 |
| RHD4CZ7A012SL5200 |  | Installation of Drawpit size 600x600x900mm for Street Lighting Network - (RD-A-1 /2)-Z7-A012-SL | 2d | 2027-03-06 | 2027-03-07 | RHD4PRSHLDOSSL1400, RHD4PRSHLSTAGSL1400, RHD4CZ7A012SL5100 |
|  | 7101 | **RHD4-02-002-A012-(SL)-Street Lighting cables** |  | 2027-03-08 | 2027-03-20 |  |
| RHD4CZ7A012SL3100 |  | Excavation for Street Lighting Cables for Street Lighting Network - (RD-A-1 /2)-Z7-A012-SL | 2d | 2027-03-08 | 2027-03-13 | RHD4ENSDZ7APPSL170, RHD4CZ7A012SL5200 |
| RHD4CZ7A012SL3200 |  | Cable Laying of Street Lighting Cables for Street Lighting Network - (RD-A-1 /2)-Z7-A012-SL | 2d | 2027-03-14 | 2027-03-15 | RHD4PRSHLDOSSL1100, RHD4ENMSSL2000, RHD4ENMSSL2010, RHD4PRSHLSTAGSL1100, RHD4CZ7A012SL3100 |
| RHD4CZ7A012SL3300 |  | Warning tape and Backfill for Street Lighting Cables for Street Lighting Network - (RD-A-1 /2)-Z7-A012-SL | 2d | 2027-03-16 | 2027-03-17 | RHD4CZ7A012SL3200 |
| RHD4CZ7A012SL3400 |  | Testing of Street Lighting Cables for Street Lighting Network - (RD-A-1 /2)-Z7-A012-SL | 2d | 2027-03-18 | 2027-03-20 | RHD4CZ7A012SL3300 |
|  | 7102 | **RHD4-02-002-A012-(SL)-Street Lighting Poles** |  | 2027-03-21 | 2027-03-31 |  |
| RHD4CZ7A012SL1100 |  | Excavation for RC Base for Lighting Poles for Street Lighting Network - (RD-A-1 /2)-Z7-A012-SL | 2d | 2027-03-21 | 2027-03-22 | RHD4ENSDZ7APPSL170, RHD4CZ7A012SL3400 |
| RHD4CZ7A012SL1200 |  | Installation for RC Base for Lighting Poles for Street Lighting Network - (RD-A-1 /2)-Z7-A012-SL | 2d | 2027-03-23 | 2027-03-24 | RHD4CZ7A012SL1100 |
| RHD4CZ7A012SL1300 |  | Backfill for RC Base for Lighting Poles for Street Lighting Network - (RD-A-1 /2)-Z7-A012-SL | 2d | 2027-03-25 | 2027-03-27 | RHD4CZ7A012SL1200 |
| RHD4CZ7A012SL1400 |  | Installation for Lighting Poles for Street Lighting Network - (RD-A-1 /2)-Z7-A012-SL | 2d | 2027-03-28 | 2027-03-29 | RHD4PRSHLDOSSL1200, RHD4ENMSSL2000, RHD4ENMSSL2010, RHD4PRSHLSTAGSL1200, RHD4CZ7A012SL1300, RHD4CZ7A012SL3400 |
| RHD4CZ7A012SL1500 |  | Luminaire Installation for Lighting Poles for Street Lighting Network - (RD-A-1 /2)-Z7-A012-SL | 2d | 2027-03-30 | 2027-03-31 | RHD4PRSHLDOSSL1300, RHD4PRSHLSTAGSL1300, RHD4CZ7A012SL1400 |
|  | 7104 | **RHD4-02-002-A012-(SL)-Street Lighting Earthing System** |  |  |  |  |
|  | 7110 | **RHD4-02-002-Z7-A012-Telecommunications Network - TC** |  | 2026-08-20 | 2027-04-17 |  |
|  | 7111 | **RHD4-02-002-A012-(TC)-Telecommunications Ducts** |  | 2027-04-01 | 2027-04-17 |  |
| RHD4CZ7A012TC2100 |  | Excavation of HDPE Ducts for Telecom Network - (RD-A-1 /2)-Z7-A012-TC | 4d | 2027-04-01 | 2027-04-05 | RHD4ENSDZ7APPTC190, RHD4CZ7A012SL1500 |
| RHD4CZ7A012TC2200 |  | Installation of HDPE Ducts for Telecom Network - (RD-A-1 /2)-Z7-A012-TC | 6d | 2027-04-06 | 2027-04-12 | RHD4PRSHLDOSTC1000, RHD4PRSHLSTAGTC1000, RHD4CZ7A012TC2100 |
| RHD4CZ7A012TC2400 |  | Backfilling of HDPE Ducts for Telecom Network - (RD-A-1 /2)-Z7-A012-TC | 4d | 2027-04-13 | 2027-04-17 | RHD4CZ7A012TC2200, RHD4CZ7A012TC5200 |
|  | 7112 | **RHD4-02-002-A012-(TC)-Telecommunications Manholes** |  | 2027-04-06 | 2027-04-12 |  |
| RHD4CZ7A012TC5100 |  | Excavation for Manholes for Telecom Network - (RD-A-1 /2)-Z7-A012-TC | 3d | 2027-04-06 | 2027-04-08 | RHD4ENSDZ7APPTC190, RHD4CZ7A012TC2100 |
| RHD4CZ7A012TC5200 |  | Installation of Manholes for Telecom Network - (RD-A-1 /2)-Z7-A012-TC | 3d | 2027-04-10 | 2027-04-12 | RHD4PRSHLDOSTC1200, RHD4PRSHLSTAGTC1200, RHD4CZ7A012TC5100, RHD4CZ7A012TC2200 SS |
|  | 7113 | **RHD4-02-002-A012-(TC)-Telecomminications Road Crossings** |  | 2026-08-20 | 2026-08-29 |  |
| RHD4CZ7A012TC3100 |  | Excavation for Road Crossings for Telecom Network - (RD-A-1 /2)-Z7-A012-TC | 2d | 2026-08-20 | 2026-08-22 | RHD4ENSDZ7APPTC190, RHD4CZ7A012ST1106 |
| RHD4CZ7A012TC3200 |  | Installation of Road Crossings for Telecom Network - (RD-A-1 /2)-Z7-A012-TC | 2d | 2026-08-23 | 2026-08-24 | RHD4PRSHLDOSTC1100, RHD4PRSHLSTAGTC1100, RHD4CZ7A012TC3100 |
| RHD4CZ7A012TC3300 |  | Pouring of Road Crossings for Telecom Network - (RD-A-1 /2)-Z7-A012-TC | 2d | 2026-08-25 | 2026-08-26 | RHD4CZ7A012TC3200 |
| RHD4CZ7A012TC3400 |  | Backfilling of Road Crossings for Telecom Network - (RD-A-1 /2)-Z7-A012-TC | 2d | 2026-08-27 | 2026-08-29 | RHD4CZ7A012TC3300 |
|  | 7114 | **RHD4-02-002-Z7-A012-Information and Communication Technologies - ICT** |  | 2026-08-20 | 2027-06-03 |  |
|  | 7115 | **RHD4-02-002-A012-(ICT)-Information and Communication Technologies Ducts** |  | 2027-04-18 | 2027-05-27 |  |
| RHD4CZ7A012ICT2100 |  | Excavation of HDPE Ducts for ICT Network - (RD-A-1 /2)-Z7-A012-ICT | 9d | 2027-04-18 | 2027-04-27 | RHD4ENSDZ7APPICT200, RHD4CZ7A012TC3100, RHD4CZ7A012TC2400 |
| RHD4CZ7A012ICT2200 |  | Installation of HDPE Ducts for ICT Network - (RD-A-1 /2)-Z7-A012-ICT | 13d | 2027-04-28 | 2027-05-12 | RHD4PRSHLDOSICT1000, RHD4PRSHLSTAGICT1000, RHD4CZ7A012ICT2100 |
| RHD4CZ7A012ICT2400 |  | Backfilling of HDPE Ducts for ICT Network - (RD-A-1 /2)-Z7-A012-ICT | 9d | 2027-05-13 | 2027-05-27 | RHD4CZ7A012ICT2200 |
|  | 7116 | **RHD4-02-002-A012-(ICT)-Information and Communication Technologies Manholes** |  | 2027-05-29 | 2027-06-03 |  |
| RHD4CZ7A012ICT5100 |  | Excavation for Manholes for ICT Network - (RD-A-1 /2)-Z7-A012-ICT | 3d | 2027-05-29 | 2027-05-31 | RHD4ENSDZ7APPICT200, RHD4CZ7A012ICT2400 |
| RHD4CZ7A012ICT5200 |  | Installation of Manholes for ICT Network - (RD-A-1 /2)-Z7-A012-ICT | 3d | 2027-06-01 | 2027-06-03 | RHD4PRSHLDOSICT1200, RHD4PRSHLSTAGICT1200, RHD4CZ7A012ICT5100 |
|  | 7117 | **RHD4-02-002-A012-(ICT)-Information and Communication Technologies Road Crossings** |  | 2026-08-20 | 2026-08-29 |  |
| RHD4CZ7A012ICT3100 |  | Excavation for Road Crossings for ICT Network - (RD-A-1 /2)-Z7-A012-ICT | 2d | 2026-08-20 | 2026-08-22 | RHD4ENSDZ7APPICT200, RHD4CZ7A012ST1106 |
| RHD4CZ7A012ICT3200 |  | Installation of Road Crossings for ICT Network - (RD-A-1 /2)-Z7-A012-ICT | 2d | 2026-08-23 | 2026-08-24 | RHD4PRSHLDOSICT1100, RHD4PRSHLSTAGICT1100, RHD4CZ7A012ICT3100, RHD4CZ7A012TC3200 SS |
| RHD4CZ7A012ICT3300 |  | Pouring of Road Crossings for ICT Network - (RD-A-1 /2)-Z7-A012-ICT | 2d | 2026-08-25 | 2026-08-26 | RHD4CZ7A012ICT3200 |
| RHD4CZ7A012ICT3400 |  | Backfilling of Road Crossings for ICT Network - (RD-A-1 /2)-Z7-A012-ICT | 2d | 2026-08-27 | 2026-08-29 | RHD4CZ7A012ICT3300 |
|  | 7105 | **RHD4-02-002-Z7-A012-Landscape Network - LS** |  |  |  |  |
|  | 7106 | **RHD4-02-002-A012-(LS)-Landscape Lighting cables** |  |  |  |  |
|  | 7107 | **RHD4-02-002-A012-(LS)-Landscape Feeder Pillars** |  |  |  |  |
|  | 7108 | **RHD4-02-002-A012-(LS)-Landscape Bollard Poles** |  |  |  |  |
|  | 7109 | **RHD4-02-002-A012-(LS)-Landscape Feeder Pillars Earthing** |  |  |  |  |
|  | 7118 | **RHD4-02-002-Z7-A012-Security Network - CCTV** |  |  |  |  |
|  | 7119 | **RHD4-02-002-A012-(CCTV)-Civil Works** |  |  |  |  |
|  | 6001 | **RHD4-02-002-Z7-C02** |  | 2026-01-29 | 2027-11-23 |  |
|  | 6076 | **RHD4-02-002-Z7-C02-Crossings Potable Network - PTCr** |  |  |  |  |
|  | 6078 | **RHD4-02-002-C02-(PTCr)-HDPE Pipes - 160 mm diameter** |  |  |  |  |
|  | 6082 | **RHD4-02-002-C02-(PTCr)-Gate Valves (Direct Buried)** |  |  |  |  |
|  | 6089 | **RHD4-02-002-C02-(PTCr)-Fire Hydrant** |  |  |  |  |
|  | 6123 | **RHD4-02-002-Z7-C02-Crossings Irrigation Network - IRRC** |  |  |  |  |
|  | 6128 | **RHD4-02-002-C02-(IRRC)-HDPE Pipes - 315 mm diameter** |  |  |  |  |
|  | 6133 | **RHD4-02-002-C02-(IRRC)-Butterfly Valve Chamber** |  |  |  |  |
|  | 6134 | **RHD4-02-002-C02-(IRRC)-Butterfly Valves** |  |  |  |  |
|  | 6180 | **RHD4-02-002-Z7-C02-Road Works - RD** |  | 2026-09-01 | 2027-11-23 |  |
|  | 6181 | **RHD4-02-002-C02-(RD)-Subgrade** |  | 2026-09-01 | 2026-09-05 |  |
| RHD4CZ7C02RD1100 |  | Supply, lay and compaction subgrade compacted thickness 300 mm for Roads - (RD-C-2)-Z7-C02-RD | 4d | 2026-09-01 | 2026-09-05 | RHD4ENSDZ7APPEW100, RHD4ENSDZ7APPRD220, RHD4CZ7C02ST1509, RHD4CZ7C02ICT3400, RHD4CZ7C02TC3400 |
|  | 6182 | **RHD4-02-002-C02-(RD)-Aggregate Base Course** |  | 2026-09-06 | 2026-09-08 |  |
| RHD4CZ7C02RD2100 |  | Supply, lay and compaction Aggregate base course compacted thickness 300 mmfor Roads - (RD-C-2)-Z7-C02-RD | 3d | 2026-09-06 | 2026-09-08 | RHD4PRSHLDOSRD1000, RHD4PRSHLSTAGRD1000, RHD4CZ7C02RD1100 |
|  | 6183 | **RHD4-02-002-C02-(RD)-Bituminous base course Two Layers, including (MC1)&(RC2)** |  | 2026-09-09 | 2027-10-06 |  |
| RHD4CZ7C02RD3100 |  | Supply, lay and Asphaltic base course including Prime Coat (MC1) for 1st Layer - (RD-C-2)-Z7-C02-RD | 3d | 2026-09-09 | 2026-09-12 | RHD4PRSHLDOSRD1100, RHD4ENMSASPH2000, RHD4ENMSASPH2010, RHD4PRSHLSTAGRD1100, RHD4CZ7C02RD2100 |

| ID | WBS | Task | Duration | Start | Finish | Predecessors |
| --- | --- | --- | --- | --- | --- | --- |
| RHD4CZ7C02RD3200 |  | Supply, lay and Asphaltic base course including Tack Coat (RC2) for 2nd Layer - (RD-C-2)-Z7-C02-RD | 3d | 2027-10-04 | 2027-10-06 | RHD4PRSHLDOSRD1100, RHD4PRSHLSTAGRD1100, RHD4CZ7C02CCTV4200 |
|  | 6185 | **RHD4-02-002-C02-(RD)-Precast Concrete Curb** |  | 2027-10-07 | 2027-10-13 |  |
| RHD4CZ7C02RD5100 |  | Supply and installation Precast Concrete Kerb for Roads - (RD-C-2)-Z7-C02-RD | 6d | 2027-10-07 | 2027-10-13 | RHD4PRSHLDOSRD1200, RHD4ENMSRD2000, RHD4ENMSRD2010, RHD4PRSHLSTAGRD1200, RHD4CZ7C02RD3200 |
|  | 6188 | **RHD4-02-002-C02-(RD)-Traffic Signage** |  | 2027-11-01 | 2027-11-07 |  |
| RHD4CZ7C02RD8100 |  | Installation of Traffic Signage for Road Network - (RD-C-2)-Z7-C02-RD | 6d | 2027-11-01 | 2027-11-07 | RHD4PRSHLDOSRD1600, RHD4PRSHLSTAGRD1600, RHD4CZ7C02RD5100, RHD4CZ7C02ICT2400, RHD4CZ7A012RD8100, RHD4CZ7C02PT4500, RHD4CZ7C013RD8100 |
|  | 6186 | **RHD4-02-002-C02-(RD)-Precast Interlocking Block Pavers** |  |  |  |  |
|  | 6184 | **RHD4-02-002-C02-(RD)-Bituminous concrete wearing course including tack coat (RC2)** |  | 2027-11-14 | 2027-11-15 |  |
| RHD4CZ7C02RD4100 |  | Supply, lay and compaction Asphaltic wearing course including tack Coat (RC2)for Road Network - (RD-C-2)-Z7-C02-RD | 2d | 2027-11-14 | 2027-11-15 | RHD4CZ7C02RD5100, RHD4CZ7A012RD4100 |
|  | 6187 | **RHD4-02-002-C02-(RD)-Pavement Marking** |  | 2027-11-21 | 2027-11-23 |  |
| RHD4CZ7C02RD7100 |  | Pavement Markings for Road Network - (RD-C-2)-Z7-C02-RD | 3d | 2027-11-21 | 2027-11-23 | RHD4PRSHLDOSRD1500, RHD4PRSHLSTAGRD1500, RHD4CZ7C02RD4100, RHD4CZ7A012RD7100 |
|  | 6005 | **RHD4-02-002-Z7-C02-Storm Network - ST** |  | 2026-08-20 | 2027-03-25 |  |
|  | 6015 | **RHD4-02-002-C02-(ST)-GRP Pipes - 1300 mm diameter** |  | 2026-08-20 | 2026-08-31 |  |
| RHD4CZ7C02ST1109 |  | Excavation works for GRP Pipe Line 1300 mm - (RD-C-2)-Z7-C02-ST | 2d | 2026-08-20 | 2026-08-22 | RHD4ENSDZ7APPST110, RHD4CZ7A012ST1106 |
| RHD4CZ7C02ST1209 |  | Bedding works for GRP Pipe Line 1300 mm - (RD-C-2)-Z7-C02-ST | 2d | 2026-08-23 | 2026-08-24 | RHD4CZ7C02ST1109 |
| RHD4CZ7C02ST1309 |  | Installing for GRP Pipe Line 1300 mm - (RD-C-2)-Z7-C02-ST | 2d | 2026-08-25 | 2026-08-26 | RHD4PRSHLSTAGST1006, RHD4CZ7C02ST1209, RHD4PRSHLDOSST1606, RHD4PRSHLPOST1000, RHD4PRSHLDOSST1006, RHD4PRSHLDOSST1605, RHD4PRSHLDOSST1005 |
| RHD4CZ7C02ST1409 |  | Primary Test for GRP Pipe Line 1300 mm - (RD-C-2)-Z7-C02-ST | 2d | 2026-08-27 | 2026-08-29 | RHD4CZ7C02ST1309 |
| RHD4CZ7C02ST1509 |  | Backfilling and warning tape works for GRP Pipe Line 1300 mm - (RD-C-2)-Z7-C02-ST | 2d | 2026-08-30 | 2026-08-31 | RHD4CZ7C02ST1409 |
|  | 6394 | **RHD4-02-002-C02-(ST)-GRP Pipes - 1400 mm diameter** |  | 2026-12-28 | 2027-01-07 |  |
| RHD4CZ7C02ST1110 |  | Excavation works for GRP Pipe Line 1400 mm - (RD-C-2)-Z7-C02-ST | 2d | 2026-12-28 | 2026-12-29 | RHD4CZ7C032TC2400, RHD4CZ7C02RW3000, RHD4CZ7C02ST1109 |
| RHD4CZ7C02ST1210 |  | Bedding works for GRP Pipe Line 1400 mm - (RD-C-2)-Z7-C02-ST | 2d | 2026-12-30 | 2026-12-31 | RHD4CZ7C02ST1110 |
| RHD4CZ7C02ST1310 |  | Installing for GRP Pipe Line 1400 mm - (RD-C-2)-Z7-C02-ST | 2d | 2027-01-02 | 2027-01-03 | RHD4CZ7C02ST1210 |
| RHD4CZ7C02ST1410 |  | Primary Test for GRP Pipe Line 1400 mm - (RD-C-2)-Z7-C02-ST | 2d | 2027-01-04 | 2027-01-05 | RHD4CZ7C02ST1310 |
| RHD4CZ7C02ST1510 |  | Backfilling and warning tape works for GRP Pipe Line 1400 mm - (RD-C-2)-Z7-C02-ST | 2d | 2027-01-06 | 2027-01-07 | RHD4CZ7C02ST1410 |
|  | 3743 | **RHD4-02-002-C02-(ST)-GRP Pipes - 1100 mm diameter** |  | 2026-12-28 | 2027-01-11 |  |
| RHD4CZ7C02ST1107 |  | Excavation works for GRP Pipe Line 1100 mm - (RD-C-2)-Z7-C02-ST | 3d | 2026-12-28 | 2026-12-30 | RHD4CZ7C02ST1110 SS, RHD4CZ7C02ST1109 |
| RHD4CZ7C02ST1207 |  | Bedding works for GRP Pipe Line 1100 mm - (RD-C-2)-Z7-C02-ST | 2d | 2026-12-31 | 2027-01-02 | RHD4CZ7C02ST1107 |
| RHD4CZ7C02ST1307 |  | Installing for GRP Pipe Line 1100 mm - (RD-C-2)-Z7-C02-ST | 2d | 2027-01-03 | 2027-01-04 | RHD4CZ7C02ST1207 |
| RHD4CZ7C02ST1407 |  | Primary Test for GRP Pipe Line 1100 mm - (RD-C-2)-Z7-C02-ST | 3d | 2027-01-05 | 2027-01-07 | RHD4CZ7C02ST1307 |
| RHD4CZ7C02ST1507 |  | Backfilling and warning tape works for GRP Pipe Line 1100 mm - (RD-C-2)-Z7-C02-ST | 3d | 2027-01-09 | 2027-01-11 | RHD4CZ7C02ST1407, RHD4CZ7C02ST1510 |
|  | 2039 | **RHD4-02-002-C02-(ST)-GRP Pipes - 1000 mm diameter** |  | 2026-12-31 | 2027-01-14 |  |
| RHD4CZ7C02ST1106 |  | Excavation works for GRP Pipe Line 1000 mm - (RD-C-2)-Z7-C02-ST | 2d | 2026-12-31 | 2027-01-02 | RHD4CZ7C02ST1107 |
| RHD4CZ7C02ST1206 |  | Bedding works for GRP Pipe Line 1000 mm - (RD-C-2)-Z7-C02-ST | 3d | 2027-01-03 | 2027-01-05 | RHD4CZ7C02ST1106 |
| RHD4CZ7C02ST1306 |  | Installing for GRP Pipe Line 1000 mm - (RD-C-2)-Z7-C02-ST | 3d | 2027-01-06 | 2027-01-09 | RHD4CZ7C02ST1206 |
| RHD4CZ7C02ST1406 |  | Primary Test for GRP Pipe Line 1000 mm - (RD-C-2)-Z7-C02-ST | 2d | 2027-01-10 | 2027-01-11 | RHD4CZ7C02ST1306 |
| RHD4CZ7C02ST1506 |  | Backfilling and warning tape works for GRP Pipe Line 1000 mm - (RD-C-2)-Z7-C02-ST | 3d | 2027-01-12 | 2027-01-14 | RHD4CZ7C02ST1406, RHD4CZ7C02ST1507 |
|  | 5254 | **RHD4-02-002-C02-(ST)-GRP Pipes - 900 mm diameter** |  | 2027-01-03 | 2027-01-14 |  |
| RHD4CZ7C02ST1105 |  | Excavation works for GRP Pipe Line 900 mm - (RD-C-2)-Z7-C02-ST | 2d | 2027-01-03 | 2027-01-04 | RHD4CZ7C02ST1106 |
| RHD4CZ7C02ST1205 |  | Bedding works for GRP Pipe Line 900 mm - (RD-C-2)-Z7-C02-ST | 2d | 2027-01-05 | 2027-01-06 | RHD4CZ7C02ST1105 |
| RHD4CZ7C02ST1305 |  | Installing for GRP Pipe Line 900 mm - (RD-C-2)-Z7-C02-ST | 2d | 2027-01-07 | 2027-01-09 | RHD4CZ7C02ST1205 |
| RHD4CZ7C02ST1405 |  | Primary Test for GRP Pipe Line 900 mm - (RD-C-2)-Z7-C02-ST | 2d | 2027-01-10 | 2027-01-11 | RHD4CZ7C02ST1305 |
| RHD4CZ7C02ST1505 |  | Backfilling and warning tape works for GRP Pipe Line 900 mm - (RD-C-2)-Z7-C02-ST | 3d | 2027-01-12 | 2027-01-14 | RHD4CZ7C02ST1405 |
|  | 6024 | **RHD4-02-002-C02-(ST)-MH Works - 2000 mm diameter** |  | 2027-01-12 | 2027-03-25 |  |
| RHD4CZ7C02ST3102 |  | Excavation and PC Blinding works for MH 2000 mm - (RD-C-2)-Z7-C02-ST | 5d | 2027-01-12 | 2027-01-17 | RHD4ENSDZ7APPST110, RHD4ENMSST2000, RHD4CZ7C02ST2100 |
| RHD4CZ7C02ST3202 |  | Installation of Base for MH 2000 mm - (RD-C-2)-Z7-C02-ST | 5d | 2027-01-18 | 2027-01-23 | RHD4PRSHLSTAGST1606, RHD4CZ7C02ST3102 |
| RHD4CZ7C02ST3302 |  | MH Ring and C.Slab works and Backfilling works for MH 2000 mm - (RD-C-2)-Z7-C02-ST | 5d | 2027-01-24 | 2027-01-28 | RHD4PRSHLDOSST1606, RHD4CZ7C02ST3202 |
| RHD4CZ7C02ST3402 |  | Steel Cover for MH 2000 mm - (RD-C-2)-Z7-C02-ST | 4d | 2027-03-16 | 2027-03-20 | RHD4PRSHLDOSST1706, RHD4PRSHLSTAGST1706, RHD4CZ7C02ST3302, RHD4CZ7C02ST1500, RHD4CZ7C02PT3202 |
| RHD4CZ7C02ST3502 |  | Finishing, Benching, Testing works for MH 2000 mm - (RD-C-2)-Z7-C02-ST | 5d | 2027-03-21 | 2027-03-25 | RHD4CZ7C02ST3402 |
|  | 6023 | **RHD4-02-002-C02-(ST)-MH Works - 1500 mm diameter** |  | 2027-01-18 | 2027-01-28 |  |
| RHD4CZ7C02ST3101 |  | Excavation and PC Blinding works for MH 1500 mm - (RD-C-2)-Z7-C02-ST | 2d | 2027-01-18 | 2027-01-19 | RHD4ENSDZ7APPST110, RHD4ENMSST2000, RHD4CZ7C02ST3102 |
| RHD4CZ7C02ST3201 |  | Installation of Base for MH 1500 mm - (RD-C-2)-Z7-C02-ST | 2d | 2027-01-20 | 2027-01-21 | RHD4PRSHLSTAGST1606, RHD4CZ7C02ST3101 |
| RHD4CZ7C02ST3301 |  | MH Ring and C.Slab works and Backfilling works for MH 1500 mm - (RD-C-2)-Z7-C02-ST | 2d | 2027-01-23 | 2027-01-24 | RHD4PRSHLDOSST1606, RHD4CZ7C02ST3201 |
| RHD4CZ7C02ST3401 |  | Steel Cover for MH 1500 mm - (RD-C-2)-Z7-C02-ST | 2d | 2027-01-25 | 2027-01-26 | RHD4PRSHLDOSST1706, RHD4PRSHLSTAGST1706, RHD4CZ7C02ST3301, RHD4CZ7C02ST1500 |
| RHD4CZ7C02ST3501 |  | Finishing, Benching, Testing works for MH 1500 mm - (RD-C-2)-Z7-C02-ST | 2d | 2027-01-27 | 2027-01-28 | RHD4CZ7C02ST3401, RHD4CZ7C02ST2500 |
|  | 6022 | **RHD4-02-002-C02-(ST)-MH Works - 1200 mm diameter** |  | 2027-01-20 | 2027-01-31 |  |
| RHD4CZ7C02ST3100 |  | Excavation and PC Blinding works for MH 1200 mm - (RD-C-2)-Z7-C02-ST | 2d | 2027-01-20 | 2027-01-21 | RHD4ENSDZ7APPST110, RHD4ENMSST2000, RHD4ENMSST2010, RHD4CZ7C02ST3101, RHD4CZ2L102PT3202 |
| RHD4CZ7C02ST3200 |  | Installation of Base for MH 1200 mm - (RD-C-2)-Z7-C02-ST | 2d | 2027-01-23 | 2027-01-24 | RHD4PRSHLSTAGST1606, RHD4CZ7C02ST3100 |
| RHD4CZ7C02ST3300 |  | MH Ring and C.Slab works and Backfilling works for MH 1200 mm - (RD-C-2)-Z7-C02-ST | 2d | 2027-01-25 | 2027-01-26 | RHD4PRSHLDOSST1606, RHD4CZ7C02ST3200, RHD4CZ2L011RD7100, RHD4CZ5L016PT3202, RHD4CZ5L016IRR3201 |
| RHD4CZ7C02ST3400 |  | Steel Cover for MH 1200 mm - (RD-C-2)-Z7-C02-ST | 2d | 2027-01-27 | 2027-01-28 | RHD4PRSHLDOSST1706, RHD4PRSHLSTAGST1706, RHD4CZ7C02ST3300, RHD4CZ7C02ST2500, RHD4CZ7C02ST1500 |
| RHD4CZ7C02ST3500 |  | Finishing, Benching, Testing works for MH 1200 mm - (RD-C-2)-Z7-C02-ST | 2d | 2027-01-30 | 2027-01-31 | RHD4CZ7C02ST3400 |
|  | 6014 | **RHD4-02-002-C02-(ST)-GRP Pipes - 1200 mm diameter** |  | 2026-08-23 | 2027-01-17 |  |
| RHD4CZ7C02ST1108 |  | Excavation works for GRP Pipe Line 1200 mm - (RD-C-2)-Z7-C02-ST | 2d | 2026-08-23 | 2026-08-24 | RHD4ENSDZ7APPST110, RHD4CZ7C02ST1109 |
| RHD4CZ7C02ST1208 |  | Bedding works for GRP Pipe Line 1200 mm - (RD-C-2)-Z7-C02-ST | 2d | 2026-08-25 | 2026-08-26 | RHD4CZ7C02ST1108 |
| RHD4CZ7C02ST1308 |  | Installing for GRP Pipe Line 1200 mm - (RD-C-2)-Z7-C02-ST | 2d | 2026-08-27 | 2026-08-29 | RHD4PRSHLSTAGST1006, RHD4CZ7C02ST1208, RHD4CZ7C02ST1309, RHD4PRSHLDOSST1606, RHD4PRSHLPOST1000, RHD4PRSHLDOSST1006, RHD4PRSHLDOSST1605, RHD4PRSHLDOSST1005 |
| RHD4CZ7C02ST1408 |  | Primary Test for GRP Pipe Line 1200 mm - (RD-C-2)-Z7-C02-ST | 2d | 2026-08-30 | 2026-08-31 | RHD4CZ7C02ST1308, RHD4CZ7C02ST1409 |
| RHD4CZ7C02ST1508 |  | Backfilling and warning tape works for GRP Pipe Line 1200 mm - (RD-C-2)-Z7-C02-ST | 2d | 2027-01-16 | 2027-01-17 | RHD4CZ7C02ST1408, RHD4CZ7C02ST1509, RHD4CZ7C02ST1506, RHD4CZ7C02ST1505, RHD4CZ7C02ST4600 |
|  | 6010 | **RHD4-02-002-C02-(ST)-GRP Pipes - 800 mm diameter** |  |  |  |  |
|  | 6008 | **RHD4-02-002-C02-(ST)-GRP Pipes - 600 mm diameter** |  |  |  |  |
|  | 6007 | **RHD4-02-002-C02-(ST)-GRP Pipes - 500 mm diameter** |  | 2027-01-05 | 2027-01-16 |  |
| RHD4CZ7C02ST1101 |  | Excavation works for GRP Pipe Line 500 mm - (RD-C-2)-Z7-C02-ST | 2d | 2027-01-05 | 2027-01-06 | RHD4ENSDZ7APPST110, RHD4CZ7C02ST1105, RHD4CZ9L05PT2402, RHD4CZ2L011SL1500, RHD4CZ9L05PT3203 |
| RHD4CZ7C02ST1201 |  | Bedding works for GRP Pipe Line 500 mm - (RD-C-2)-Z7-C02-ST | 2d | 2027-01-07 | 2027-01-09 | RHD4CZ7C02ST1101 |

| ID | WBS | Task | Duration | Start | Finish | Predecessors |
| --- | --- | --- | --- | --- | --- | --- |
| RHD4CZ7C02ST1301 |  | Installing for GRP Pipe Line 500 mm - (RD-C-2)-Z7-C02-ST | 2d | 2027-01-10 | 2027-01-11 | RHD4PRSHLSTAGST1006, RHD4CZ7C02ST1201, RHD4PRSHLDOSST1606, RHD4PRSHLPOST1000, RHD4PRSHLDOSST1006, RHD4PRSHLDOSST1605, RHD4PRSHLDOSST1005 |
| RHD4CZ7C02ST1401 |  | Primary Test for GRP Pipe Line 500 mm - (RD-C-2)-Z7-C02-ST | 2d | 2027-01-12 | 2027-01-13 | RHD4CZ7C02ST1301 |
| RHD4CZ7C02ST1501 |  | Backfilling and warning tape works for GRP Pipe Line 500 mm - (RD-C-2)-Z7-C02-ST | 2d | 2027-01-14 | 2027-01-16 | RHD4CZ7C02ST1401 |
|  | 6006 | **RHD4-02-002-C02-(ST)-GRP Pipes - 400 mm diameter** |  | 2027-01-07 | 2027-01-18 |  |
| RHD4CZ7C02ST1100 |  | Excavation works for GRP Pipe Line 400 mm - (RD-C-2)-Z7-C02-ST | 2d | 2027-01-07 | 2027-01-09 | RHD4ENSDZ7APPST110, RHD4CZ7C02ST1101, RHD4CZ9L05SW3500, RHD4CZ9L05PT3200 |
| RHD4CZ7C02ST1200 |  | Bedding works for GRP Pipe Line 400 mm - (RD-C-2)-Z7-C02-ST | 2d | 2027-01-10 | 2027-01-11 | RHD4CZ7C02ST1100, RHD4CZ4L014PT3100, RHD4CZ4A013ICT3400 |
| RHD4CZ7C02ST1300 |  | Installing for GRP Pipe Line 400 mm - (RD-C-2)-Z7-C02-ST | 2d | 2027-01-12 | 2027-01-13 | RHD4PRSHLSTAGST1006, RHD4CZ7C02ST1200, RHD4CZ7C02ST1301, RHD4PRSHLDOSST1606, RHD4PRSHLPOST1000, RHD4PRSHLDOSST1006, RHD4PRSHLDOSST1605, RHD4PRSHLDOSST1005 |
| RHD4CZ7C02ST1400 |  | Primary Test for GRP Pipe Line 400 mm - (RD-C-2)-Z7-C02-ST | 2d | 2027-01-14 | 2027-01-16 | RHD4CZ7C02ST1300, RHD4CZ7C02ST1401 |
| RHD4CZ7C02ST1500 |  | Backfilling and warning tape works for GRP Pipe Line 400 mm - (RD-C-2)-Z7-C02-ST | 2d | 2027-01-17 | 2027-01-18 | RHD4CZ7C02ST1400, RHD4CZ7C02ST1501 |
|  | 6021 | **RHD4-02-002-C02-(ST)-UPVC Pipes - 400 mm diameter** |  |  |  |  |
|  | 6020 | **RHD4-02-002-C02-(ST)-UPVC Pipes - 300 mm diameter** |  | 2027-01-10 | 2027-01-20 |  |
| RHD4CZ7C02ST2100 |  | Excavation works for UPVC Pipe Line 300 mm - (RD-C-2)-Z7-C02-ST | 2d | 2027-01-10 | 2027-01-11 | RHD4ENSDZ7APPST110, RHD4CZ7C02ST1100 |
| RHD4CZ7C02ST2200 |  | Bedding works for UPVC Pipe Line 300 mm - (RD-C-2)-Z7-C02-ST | 2d | 2027-01-12 | 2027-01-13 | RHD4CZ7C02ST2100 |
| RHD4CZ7C02ST2300 |  | Installing for UPVC Pipe Line 300 mm - (RD-C-2)-Z7-C02-ST | 2d | 2027-01-14 | 2027-01-16 | RHD4PRSHLDOSST1106, RHD4PRSHLSTAGST1106, RHD4CZ7C02ST2200 |
| RHD4CZ7C02ST2400 |  | Primary Test for UPVC Pipe Line 300 mm - (RD-C-2)-Z7-C02-ST | 2d | 2027-01-17 | 2027-01-18 | RHD4CZ7C02ST2300 |
| RHD4CZ7C02ST2500 |  | Backfilling and warning tape works for UPVC Pipe Line 300 mm - (RD-C-2)-Z7-C02-ST | 2d | 2027-01-19 | 2027-01-20 | RHD4CZ7C02ST2400, RHD4CZ7C02ST6100 |
|  | 6028 | **RHD4-02-002-C02-(ST)-Concrete Encasement** |  | 2027-01-14 | 2027-01-16 |  |
| RHD4CZ7C02ST6100 |  | Pipe Encasement for Storm Pipelines - (RD-C-2)-Z7-C02-ST | 2d | 2027-01-14 | 2027-01-16 | RHD4CZ7C02ST2300 SS, RHD4CZ7C02ST2300 FF, RHD4CZ7C02ST2200 |
|  | 6029 | **RHD4-02-002-Z7-C02-Catch Basin - ST** |  | 2027-01-27 | 2027-04-03 |  |
|  | 6030 | **RHD4-02-002-C02-(ST)-Single Catch Basin Works** |  | 2027-01-27 | 2027-03-31 |  |
| RHD4CZ7C02ST7100 |  | Excavation works for Single Catch Basin - (RD-C-2)-Z7-C02-ST | 5d | 2027-01-27 | 2027-02-01 | RHD4ENSDZ7APPST110, RHD4CZ2L102LV3400, RHD4CZ7C02ST3300, RHD4CZ7C02ST3301 |
| RHD4CZ7C02ST7200 |  | PC Blinding, Installation and Pipe connection for Single Catch Basin - (RD-C-2)-Z7-C02-ST | 5d | 2027-02-02 | 2027-02-07 | RHD4CZ7C02ST7100 |
| RHD4CZ7C02ST7300 |  | Rings & C.Slab & Final Backfill for Single Catch Basin - (RD-C-2)-Z7-C02-ST | 6d | 2027-02-08 | 2027-02-14 | RHD4PRSHLDOSST1306, RHD4PRSHLSTAGST1306, RHD4CZ7C02ST7200 |
| RHD4CZ7C02ST7400 |  | Steel Cover for Single Catch Basin - (RD-C-2)-Z7-C02-ST | 5d | 2027-03-16 | 2027-03-21 | RHD4PRSHLDOSST1706, RHD4CZ7C02ST7300, RHD4CZ7C02PT3202 |
| RHD4CZ7C02ST7500 |  | Finishing and Insulation works for Single Catch Basin - (RD-C-2)-Z7-C02-ST | 9d | 2027-03-22 | 2027-03-31 | RHD4CZ7C02ST7400 |
|  | 6031 | **RHD4-02-002-C02-(ST)-Double Catch Basin Works** |  | 2027-01-27 | 2027-04-03 |  |
| RHD4CZ7C02ST8100 |  | Excavation works for Double Catch Basin - (RD-C-2)-Z7-C02-ST | 2d | 2027-01-27 | 2027-01-28 | RHD4ENSDZ7APPST110, RHD4CZ7C02ST7100 SS, RHD4CZ7C02ST3300, RHD4CZ7C02ST3301 |
| RHD4CZ7C02ST8200 |  | PC Blinding, Installation and Pipe connection for Double Catch Basin - (RD-C-2)-Z7-C02-ST | 2d | 2027-02-08 | 2027-02-09 | RHD4CZ7C02ST8100, RHD4CZ7C02ST7200 |
| RHD4CZ7C02ST8300 |  | Rings & C.Slab & Final Backfillfor Double Catch Basin - (RD-C-2)-Z7-C02-ST | 2d | 2027-02-15 | 2027-02-16 | RHD4PRSHLDOSST1306, RHD4PRSHLSTAGST1306, RHD4CZ7C02ST8200, RHD4CZ7C02ST7300 |
| RHD4CZ7C02ST8400 |  | Steel Cover for Double Catch Basin - (RD-C-2)-Z7-C02-ST | 2d | 2027-03-22 | 2027-03-23 | RHD4PRSHLDOSST1706, RHD4CZ7C02ST8300, RHD4CZ7C02ST7400 |
| RHD4CZ7C02ST8500 |  | Finishing and Insulation works for Double Catch Basin - (RD-C-2)-Z7-C02-ST | 2d | 2027-04-01 | 2027-04-03 | RHD4CZ7C02ST8400, RHD4CZ7C02ST7500 |
|  | 3973 | **RHD4-02-002-Z7-C02-Sewage Network - SW** |  | 2027-01-21 | 2027-02-07 |  |
|  | 3785 | **RHD4-02-002-C02-(SW)-GRP Pipes - 300 mm diameter** |  | 2027-01-21 | 2027-02-01 |  |
| RHD4CZ7C02SW1100 |  | Excavation works for GRP Pipe Line 300 mm - (RD-C-2)-Z7-C02-SW | 2d | 2027-01-21 | 2027-01-23 | RHD4CZ7C02ST2500 |
| RHD4CZ7C02SW1200 |  | Bedding works for GRP Pipe Line 300 mm - (RD-C-2)-Z7-C02-SW | 2d | 2027-01-24 | 2027-01-25 | RHD4CZ7C02SW1100 |
| RHD4CZ7C02SW1300 |  | Installing for GRP Pipe Line 300 mm - (RD-C-2)-Z7-C02-SW | 2d | 2027-01-26 | 2027-01-27 | RHD4CZ7C02SW1200 |
| RHD4CZ7C02SW1400 |  | Primary Test for GRP Pipe Line 300 mm - (RD-C-2)-Z7-C02-SW | 2d | 2027-01-28 | 2027-01-30 | RHD4CZ7C02SW1300 |
| RHD4CZ7C02SW1500 |  | Backfilling and warning tape works for GRP Pipe Line 300 mm - (RD-C-2)-Z7-C02-SW | 2d | 2027-01-31 | 2027-02-01 | RHD4CZ7C02SW1400 |
|  | 3794 | **RHD4-02-002-C02-(SW)-MH Works - 1200 mm diameter** |  | 2027-01-24 | 2027-02-07 |  |
| RHD4CZ7C02SW3100 |  | Excavation and PC Blinding works for MH 1200 mm - (RD-C-2)-Z7-C02-SW | 2d | 2027-01-24 | 2027-01-25 | RHD4CZ7C02SW1100 |
| RHD4CZ7C02SW3200 |  | Installation of Base for MH 1200 mm - (RD-C-2)-Z7-C02-SW | 3d | 2027-01-26 | 2027-01-28 | RHD4CZ7C02SW3100 |
| RHD4CZ7C02SW3300 |  | MH Ring and C.Slab works and Backfilling works for MH 1200 mm - (RD-C-2)-Z7-C02-SW | 3d | 2027-01-30 | 2027-02-01 | RHD4CZ7C02SW3200 |
| RHD4CZ7C02SW3400 |  | Steel Cover for MH 1200 mm - (RD-C-2)-Z7-C02-SW | 2d | 2027-02-02 | 2027-02-03 | RHD4CZ7C02SW3300 |
| RHD4CZ7C02SW3500 |  | Finishing, Benching, Testing works for MH 1200 mm - (RD-C-2)-Z7-C02-SW | 3d | 2027-02-04 | 2027-02-07 | RHD4CZ7C02SW3400, RHD4CZ7C02ST1508 |
|  | 4299 | **RHD4-02-002-Z7-C02-Concrete Box Culvert - ST** |  | 2026-01-29 | 2026-05-07 |  |
|  | 4300 | **RHD4-02-002-C02-(ST)-Concrete Box Culvert** |  | 2026-01-29 | 2026-05-07 |  |
| RHD4CZ7C02ST4100 |  | Excavation works for Box Culvert - (RD-C-2)-Z7-C02-ST(Completed) | 46d | 2026-01-29 | 2026-03-26 | RHD4ENMARAPPTU100 |
| RHD4CZ7C02ST4200 |  | PC works for Box Culvert - (RD-C-2)-Z7-C02-ST(Completed) | 43d | 2026-01-29 | 2026-03-23 | RHD4CZ7C02ST4100 SS |
| RHD4CZ7C02ST4400 |  | Raft works for Box Culvert - (RD-C-2)-Z7-C02-ST(Completed) | 21d | 2026-01-29 | 2026-02-23 | RHD4CZ7C02ST4200 SS |
| RHD4CZ7C02ST4500 |  | Wall and slab works for Box Culvert - (RD-C-2)-Z7-C02-ST | 6d | 2026-03-28 | 2026-04-02 | RHD4CZ7C02ST4400, RHD4CZ7C02ST4200, RHD4ENMARAPPTU100, RHD4CZ7C02ST4100 |
| RHD4CZ7C02ST4700 |  | Backfilling works for Box Culvert - (RD-C-2)-Z7-C02-ST | 19d | 2026-04-11 | 2026-05-02 | RHD4CZ7C02ST4500, RHD4CZ7C02ST5300 |
| RHD4CZ7C02ST4600 |  | Insulation and Testing for Box Culvert - (RD-C-2)-Z7-C02-ST | 5d | 2026-05-03 | 2026-05-07 | RHD4CZ7C02ST4700, RHD4CZ7C02ST5400 |
|  | 4301 | **RHD4-02-002-C02-(ST)-Concrete Chambers** |  | 2026-04-04 | 2026-04-12 |  |
| RHD4CZ7C02ST5100 |  | Excavation and Bedding for Concrete Chambers - for Box Culvert - (RD-C-2)-Z7-C02-ST | 2d | 2026-04-04 | 2026-04-05 | RHD4CZ7C02ST4500 |
| RHD4CZ7C02ST5200 |  | PC works for Concrete Chambers - for Box Culvert - (RD-C-2)-Z7-C02-ST | 2d | 2026-04-06 | 2026-04-07 | RHD4CZ7C02ST5100 |
| RHD4CZ7C02ST5300 |  | Installation for Concrete Chambers - for Box Culvert - (RD-C-2)-Z7-C02-ST | 2d | 2026-04-08 | 2026-04-09 | RHD4CZ7C02ST5200 |
| RHD4CZ7C02ST5400 |  | Backfilling works for Concrete Chambers - for Box Culvert - (RD-C-2)-Z7-C02-ST | 2d | 2026-04-11 | 2026-04-12 | RHD4CZ7C02ST5300 |
|  | 6091 | **RHD4-02-002-Z7-C02-Potable Network - PT** |  | 2027-02-02 | 2027-03-28 |  |
|  | 6093 | **RHD4-02-002-C02-(PT)-HDPE Pipes - 160 mm diameter** |  | 2027-02-02 | 2027-02-28 |  |
| RHD4CZ7C02PT1101 |  | Excavation works for HDPE Pipline 160 mm - (RD-C-2)-Z7-C02-PT | 4d | 2027-02-02 | 2027-02-06 | RHD4ENSDZ7APPPT130, RHD4ENMSPT2000, RHD4CZ7C02SW1100, RHD4CZ7C02SW1500 |
| RHD4CZ7C02PT1201 |  | Bedding works for HDPE Pipline 160 mm - (RD-C-2)-Z7-C02-PT | 4d | 2027-02-07 | 2027-02-10 | RHD4CZ7C02PT1101 |
| RHD4CZ7C02PT1301 |  | Installing for HDPE Pipline 160 mm - (RD-C-2)-Z7-C02-PT | 6d | 2027-02-11 | 2027-02-17 | RHD4PRSHLDOSPT1000, RHD4PRSHLSTAGPT1000, RHD4CZ7C02PT1201, RHD4CZ6C062IRR3203 FF, RHD4CZ6RA01CCTV1500 FF, RHD4CZ9L02IRR3203 |
| RHD4CZ7C02PT1401 |  | Primary Test for HDPE Pipline 160 mm - (RD-C-2)-Z7-C02-PT | 3d | 2027-02-18 | 2027-02-21 | RHD4CZ7C02PT1301, RHD4CZ8C014IRR3200 |
| RHD4CZ7C02PT1501 |  | Backfilling and warning tape works for HDPE Pipline 160 mm - (RD-C-2)-Z7-C02-PT | 5d | 2027-02-23 | 2027-02-28 | RHD4CZ7C02PT1401, RHD4CZ8C014IRR3202, RHD4CZ8C014IRR1501, RHD4CZ4C031CCTV6100, RHD4CZ5C061TC2400, RHD4CZ3L122IRR3202, RHD4CZ9C071PT3200, RHD4CZ7L131PT3203 |
|  | 4969 | **RHD4-02-002-C02-(PT)-Fire Hydrant** |  | 2027-03-01 | 2027-03-16 |  |
| RHD4CZ7C02PT4100 |  | Excavation and Bedding and Pipe Installation for Fire Hydrant - (RD-C-2)-Z7-C02-PT | 3d | 2027-03-01 | 2027-03-03 | RHD4CZ7C02PT1501 |
| RHD4CZ7C02PT4200 |  | Valve Installation for Fire Hydrant - (RD-C-2)-Z7-C02-PT | 2d | 2027-03-04 | 2027-03-06 | RHD4CZ7C02PT4100 |
| RHD4CZ7C02PT4300 |  | Stem for Fire Hydrant - (RD-C-2)-Z7-C02-PT | 2d | 2027-03-07 | 2027-03-08 | RHD4CZ7C02PT4200 |
| RHD4CZ7C02PT4400 |  | Fire Installation for Fire Hydrant - (RD-C-2)-Z7-C02-PT | 2d | 2027-03-13 | 2027-03-14 | RHD4CZ7C02PT4300 |
| RHD4CZ7C02PT4500 |  | Protection Barriers for Fire Hydrant - (RD-C-2)-Z7-C02-PT | 2d | 2027-03-15 | 2027-03-16 | RHD4CZ7C02PT4400 |

| ID | WBS | Task | Duration | Start | Finish | Predecessors |
| --- | --- | --- | --- | --- | --- | --- |
|  | 6100 | **RHD4-02-002-C02-(PT)-Wash out Valve Chambers** |  | 2027-03-01 | 2027-03-13 |  |
| RHD4CZ7C02PT2101 |  | Excavation and Bedding for Wash out Valve Chambers for Potable Water Network - (RD-C-2)-Z7-C02-PT | 2d | 2027-03-01 | 2027-03-02 | RHD4ENSDZ7APPPT130, RHD4CZ7C02PT1501 |
| RHD4CZ7C02PT2201 |  | PC works for Wash out Valve Chambers for Potable Water Network - (RD-C-2)-Z7-C02-PT | 2d | 2027-03-03 | 2027-03-04 | RHD4CZ7C02PT2101 |
| RHD4CZ7C02PT2301 |  | Installation for Wash out Valve Chambers for Potable Water Network - (RD-C-2)-Z7-C02-PT | 2d | 2027-03-06 | 2027-03-07 | RHD4PRSHLDOSPT1100, RHD4PRSHLDOSPT1400, RHD4PRSHLSTAGPT1100, RHD4PRSHLSTAGPT1400, RHD4CZ7C02PT2201 |
| RHD4CZ7C02PT2401 |  | Backfilling works for Wash out Valve Chambers for Potable Water Network - (RD-C-2)-Z7-C02-PT | 2d | 2027-03-08 | 2027-03-13 | RHD4CZ7C02PT2301 |
|  | 6101 | **RHD4-02-002-C02-(PT)-Wash out Valves** |  | 2027-03-08 | 2027-03-15 |  |
| RHD4CZ7C02PT3102 |  | Installation for Wash out Valves for Potable Water Network - (RD-C-2)-Z7-C02-PT | 2d | 2027-03-08 | 2027-03-13 | RHD4PRSHLDOSPT1200, RHD4PRSHLSTAGPT1200, RHD4CZ7C02PT2301 |
| RHD4CZ7C02PT3202 |  | Stem and Service box for Wash out Valves for Potable Water Network - (RD-C-2)-Z7-C02-PT | 2d | 2027-03-14 | 2027-03-15 | RHD4PRSHLDOSPT1300, RHD4PRSHLSTAGPT1300, RHD4CZ7C02PT3102, RHD4CZ7C02PT2401 |
|  | 6102 | **RHD4-02-002-C02-(PT)-Air Valve Chambers** |  | 2027-03-01 | 2027-03-13 |  |
| RHD4CZ7C02PT2102 |  | Excavation and Bedding for Air Valve Chambers for Potable Water Network - (RD-C-2)-Z7-C02-PT | 2d | 2027-03-01 | 2027-03-02 | RHD4ENSDZ7APPPT130, RHD4CZ7C02PT1501, RHD4CZ7L015ST3501, RHD4CZ3C011LV4300 |
| RHD4CZ7C02PT2202 |  | PC works for Air Valve Chambers for Potable Water Network - (RD-C-2)-Z7-C02-PT | 2d | 2027-03-03 | 2027-03-04 | RHD4CZ7C02PT2102 |
| RHD4CZ7C02PT2302 |  | Installation for Air Valve Chambers for Potable Water Network - (RD-C-2)-Z7-C02-PT | 2d | 2027-03-06 | 2027-03-07 | RHD4PRSHLDOSPT1100, RHD4PRSHLDOSPT1400, RHD4PRSHLSTAGPT1100, RHD4PRSHLSTAGPT1400, RHD4CZ7C02PT2202, RHD4CZ9L02IRR3200 |
| RHD4CZ7C02PT2402 |  | Backfilling works for Air Valve Chambers for Potable Water Network - (RD-C-2)-Z7-C02-PT | 2d | 2027-03-08 | 2027-03-13 | RHD4CZ7C02PT2302, RHD4CZ7A012IRR1503, RHD4CZ7C032IRR3202 |
|  | 6103 | **RHD4-02-002-C02-(PT)-Air Valves** |  | 2027-03-08 | 2027-03-15 |  |
| RHD4CZ7C02PT3103 |  | Installation for Air Valves for Potable Water Network - (RD-C-2)-Z7-C02-PT | 2d | 2027-03-08 | 2027-03-13 | RHD4PRSHLDOSPT1200, RHD4PRSHLSTAGPT1200, RHD4CZ7C02PT2302 |
| RHD4CZ7C02PT3203 |  | Stem and Service box for Air Valves for Potable Water Network - (RD-C-2)-Z7-C02-PT | 2d | 2027-03-14 | 2027-03-15 | RHD4PRSHLDOSPT1300, RHD4PRSHLSTAGPT1300, RHD4CZ7C02PT3103, RHD4CZ7C02PT2402, RHD4CZ9C071IRR1500 FF, RHD4CZ9C071IRR1507, RHD4CZ9L06IRR1500, RHD4CZ7A012SW3500, RHD4CZ9C071IRR3201, RHD4CZ4C031RD8100, RHD4CZ7L131SW3500 |
|  | 6105 | **RHD4-02-002-C02-(PT)-Concrete Encasement** |  |  |  |  |
|  | 6097 | **RHD4-02-002-C02-(PT)-Gate Valves (Direct Buried)** |  | 2027-03-16 | 2027-03-28 |  |
| RHD4CZ7C02PT3100 |  | Installation for Direct Buried Gate Valves - (RD-C-2)-Z7-C02-PT | 3d | 2027-03-16 | 2027-03-18 | RHD4PRSHLDOSPT1200, RHD4PRSHLSTAGPT1200, RHD4CZ7C02PT3203, RHD4CZ4C031RD7100 |
| RHD4CZ7C02PT3200 |  | Stem and Service box for Direct Buried Gate Valves - (RD-C-2)-Z7-C02-PT | 8d | 2027-03-20 | 2027-03-28 | RHD4PRSHLDOSPT1300, RHD4PRSHLSTAGPT1300, RHD4CZ7C02PT3100, RHD4CZ7C02PT1501, RHD4CZ2C082RD8100, RHD4CZ4RA02RD7100, RHD4CZ7C032IRR3203, RHD4CZ4L01SL5200, RHD4CZ7C013ICT2400, RHD4CZ8A011LV5200 |
|  | 6106 | **RHD4-02-002-Z7-C02-Irrigation Network - IRR** |  | 2027-03-29 | 2027-04-20 |  |
|  | 6107 | **RHD4-02-002-C02-(IRR)-HDPE Pipes - 160 mm diameter** |  | 2027-04-04 | 2027-04-14 |  |
| RHD4CZ7C02IRR1100 |  | Excavation works for HDPE Pipline 160 mm - (RD-C-2)-Z7-C02-IRR | 2d | 2027-04-04 | 2027-04-05 | RHD4ENSDZ7APPIRR140, RHD4ENMSRR2000, RHD4CZ7C02IRR1104 |
| RHD4CZ7C02IRR1200 |  | Bedding works for HDPE Pipline 160 mm - (RD-C-2)-Z7-C02-IRR | 2d | 2027-04-06 | 2027-04-07 | RHD4CZ7C02IRR1100 |
| RHD4CZ7C02IRR1300 |  | Installing for HDPE Pipline 160 mm - (RD-C-2)-Z7-C02-IRR | 2d | 2027-04-08 | 2027-04-10 | RHD4PRSHLDOSIRR1000, RHD4PRSHLSTAGIRR1000, RHD4CZ7C02IRR1200 |
| RHD4CZ7C02IRR1400 |  | Primary Test for HDPE Pipline 160 mm - (RD-C-2)-Z7-C02-IRR | 2d | 2027-04-11 | 2027-04-12 | RHD4CZ7C02IRR1300 |
| RHD4CZ7C02IRR1500 |  | Backfilling and warning tape works for HDPE Pipline 160 mm - (RD-C-2)-Z7-C02-IRR | 2d | 2027-04-13 | 2027-04-14 | RHD4CZ7C02IRR1400 |
|  | 6111 | **RHD4-02-002-C02-(IRR)-HDPE Pipes - 315 mm diameter** |  | 2027-03-29 | 2027-04-20 |  |
| RHD4CZ7C02IRR1104 |  | Excavation works for HDPE Pipline 315 mm - (RD-C-2)-Z7-C02-IRR | 5d | 2027-03-29 | 2027-04-03 | RHD4ENSDZ7APPIRR140, RHD4ENMSRR2000, RHD4CZ7C02PT1101, RHD4CZ7C02PT3200 |
| RHD4CZ7C02IRR1204 |  | Bedding works for HDPE Pipline 315 mm - (RD-C-2)-Z7-C02-IRR | 4d | 2027-04-04 | 2027-04-07 | RHD4CZ7C02IRR1104 |
| RHD4CZ7C02IRR1304 |  | Installing for HDPE Pipline 315 mm - (RD-C-2)-Z7-C02-IRR | 5d | 2027-04-08 | 2027-04-13 | RHD4PRSHLDOSIRR1000, RHD4PRSHLSTAGIRR1000, RHD4CZ7C02IRR1204 |
| RHD4CZ7C02IRR1404 |  | Primary Test for HDPE Pipline 315 mm - (RD-C-2)-Z7-C02-IRR | 2d | 2027-04-14 | 2027-04-15 | RHD4CZ7C02IRR1304 |
| RHD4CZ7C02IRR1504 |  | Backfilling and warning tape works for HDPE Pipline 315 mm - (RD-C-2)-Z7-C02-IRR | 4d | 2027-04-17 | 2027-04-20 | RHD4CZ7C02IRR1404 |
|  | 6112 | **RHD4-02-002-C02-(IRR)-HDPE Pipes - 400 mm diameter** |  |  |  |  |
|  | 6113 | **RHD4-02-002-C02-(IRR)-HDPE Pipes - 450 mm diameter** |  |  |  |  |
|  | 6115 | **RHD4-02-002-C02-(IRR)-Gate Valves (Direct Buried)** |  | 2027-04-12 | 2027-04-17 |  |
| RHD4CZ7C02IRR3100 |  | Installation for Direct Buried Gate Valves - (RD-C-2)-Z7-C02-IRR | 2d | 2027-04-12 | 2027-04-13 | RHD4PRSHLDOSIRR1100, RHD4PRSHLSTAGIRR1100, RHD4CZ7C02IRR1304 SS, RHD4CZ7C02IRR1304 FF, RHD4CZ7C02IRR1300 SS, RHD4CZ7C02IRR1300 FF |
| RHD4CZ7C02IRR3200 |  | Stem and Service box for Direct Buried Gate Valves - (RD-C-2)-Z7-C02-IRR | 2d | 2027-04-15 | 2027-04-17 | RHD4PRSHLDOSIRR1300, RHD4PRSHLSTAGIRR1300, RHD4CZ7C02IRR3100, RHD4CZ7C02IRR1500 |
|  | 6116 | **RHD4-02-002-C02-(IRR)-Butterfly Valve Chamber** |  | 2027-04-06 | 2027-04-15 |  |
| RHD4CZ7C02IRR2100 |  | Excavation and Bedding for Butterfly Valve Chamber for Irrigation Network - (RD-C-2)-Z7-C02-IRR | 2d | 2027-04-06 | 2027-04-07 | RHD4ENSDZ7APPIRR140, RHD4CZ7C02IRR1100 |
| RHD4CZ7C02IRR2200 |  | PC works for Butterfly Valve Chamber for Irrigation Network - (RD-C-2)-Z7-C02-IRR | 2d | 2027-04-08 | 2027-04-10 | RHD4CZ7C02IRR2100 |
| RHD4CZ7C02IRR2300 |  | Installation for Butterfly Valve Chamber for Irrigation Network - (RD-C-2)-Z7-C02-IRR | 2d | 2027-04-11 | 2027-04-12 | RHD4PRSHLDOSIRR1200, RHD4PRSHLDOSIRR1400, RHD4PRSHLSTAGIRR1200, RHD4PRSHLSTAGIRR1400, RHD4CZ7C02IRR2200 |
| RHD4CZ7C02IRR2400 |  | Backfilling works for Butterfly Valve Chamber for Irrigation Network - (RD-C-2)-Z7-C02-IRR | 3d | 2027-04-13 | 2027-04-15 | RHD4CZ7C02IRR2300 |
|  | 6117 | **RHD4-02-002-C02-(IRR)-Butterfly Valves** |  | 2027-04-13 | 2027-04-17 |  |
| RHD4CZ7C02IRR3101 |  | Installation for Butterfly Valves for Irrigation Network - (RD-C-2)-Z7-C02-IRR | 2d | 2027-04-13 | 2027-04-14 | RHD4PRSHLDOSIRR1100, RHD4PRSHLSTAGIRR1100, RHD4CZ7C02IRR2300 |
| RHD4CZ7C02IRR3201 |  | Stem and Service box for Butterfly Valves for Irrigation Network - (RD-C-2)-Z7-C02-IRR | 2d | 2027-04-15 | 2027-04-17 | RHD4PRSHLDOSIRR1300, RHD4PRSHLSTAGIRR1300, RHD4CZ7C02IRR3101, RHD4CZ7C02IRR2400 SS |
|  | 6686 | **RHD4-02-002-C02-(IRR)-Wash out Valves** |  | 2027-04-13 | 2027-04-17 |  |
| RHD4CZ7C02IRR3102 |  | Installation for Wash out Valve for Irrigation Network - (RD-C-2)-Z7-C02-IRR | 2d | 2027-04-13 | 2027-04-14 | RHD4CZ7C02IRR2301 |
| RHD4CZ7C02IRR3202 |  | Stem and Service box for Wash out Valve for Irrigation Network - (RD-C-2)-Z7-C02-IRR | 2d | 2027-04-15 | 2027-04-17 | RHD4CZ7C02IRR3102, RHD4CZ7C02IRR2401, RHD4CZ7C02SW3500 |
|  | 6685 | **RHD4-02-002-C02-(IRR)-Wash out Chamber** |  | 2027-04-06 | 2027-04-14 |  |
| RHD4CZ7C02IRR2101 |  | Excavation and Bedding for Wash out Chamber for Irrigation Network - (RD-C-2)-Z7-C02-IRR | 2d | 2027-04-06 | 2027-04-07 | RHD4CZ7C02IRR1100 |
| RHD4CZ7C02IRR2201 |  | PC works for Wash out Chamber for Irrigation Network - (RD-C-2)-Z7-C02-IRR | 2d | 2027-04-08 | 2027-04-10 | RHD4CZ7C02IRR2101 |
| RHD4CZ7C02IRR2301 |  | Installation for Wash out Chamber for Irrigation Network - (RD-C-2)-Z7-C02-IRR | 2d | 2027-04-11 | 2027-04-12 | RHD4CZ7C02IRR2201 |
| RHD4CZ7C02IRR2401 |  | Backfilling works for Wash out Chamber for Irrigation Network - (RD-C-2)-Z7-C02-IRR | 2d | 2027-04-13 | 2027-04-14 | RHD4CZ7C02IRR2301 |
|  | 6140 | **RHD4-02-002-Z7-C02-Medium Voltage Network - MV** |  | 2027-02-03 | 2027-03-27 |  |
|  | 6141 | **RHD4-02-002-C02-(MV)-Medium Voltage cable trench** |  | 2027-02-03 | 2027-03-08 |  |
| RHD4CZ7C02MV1100 |  | Excavation for Medium Voltage Trench - (RD-C-2)-Z7-C02-MV | 4d | 2027-02-03 | 2027-02-07 | RHD4ENSDZ7APPMV150, RHD4CZ7C02RD3100, RHD4CZ8A011MV1100 |
| RHD4CZ7C02MV1200 |  | Trench Backfilling for Medium Voltage Network - (RD-C-2)-Z7-C02-MV | 4d | 2027-03-04 | 2027-03-08 | RHD4CZ7C02MV3200 |
|  | 6142 | **RHD4-02-002-C02-(MV)-Medium Voltage duct banks** |  | 2027-02-08 | 2027-02-17 |  |
| RHD4CZ7C02MV2100 |  | Excavation of Duct Banks for Medium Voltage Network - (RD-C-2)-Z7-C02-MV | 2d | 2027-02-08 | 2027-02-09 | RHD4ENSDZ7APPMV150, RHD4CZ7C02MV1100 |
| RHD4CZ7C02MV2200 |  | Installation of Duct Banks for Medium Voltage Network - (RD-C-2)-Z7-C02-MV | 3d | 2027-02-10 | 2027-02-13 | RHD4PRSHLDOSMV1000, RHD4PRSHLSTAGMV1000, RHD4CZ7C02MV2100 |
| RHD4CZ7C02MV2300 |  | Pouring of Duct Banks for Medium Voltage Network - (RD-C-2)-Z7-C02-MV | 2d | 2027-02-14 | 2027-02-15 | RHD4CZ7C02MV2200 |
| RHD4CZ7C02MV2400 |  | Backfilling of Duct Banks for Medium Voltage Network - (RD-C-2)-Z7-C02-MV | 2d | 2027-02-16 | 2027-02-17 | RHD4CZ7C02MV2300 |
|  | 6143 | **RHD4-02-002-C02-(MV)-Medium Voltage cables 3Cx 500 mm²** |  | 2027-02-08 | 2027-03-27 |  |
| RHD4CZ7C02MV3100 |  | Installation of Medium Voltage Cables 3Cx 500 mm² - (RD-C-2)-Z7-C02-MV | 15d | 2027-02-08 | 2027-02-25 | RHD4PRSHLDOSMV1100, RHD4ENMSMV2000, RHD4ENMSMV2010, RHD4PRSHLSTAGMV1100, RHD4CZ7C02MV1100 |
| RHD4CZ7C02MV3200 |  | Joints Installation of Medium Voltage Cables 3Cx 500 mm² - (RD-C-2)-Z7-C02-MV | 5d | 2027-02-27 | 2027-03-03 | RHD4PRSHLDOSMV1300, RHD4PRSHLSTAGMV1300, RHD4CZ7C02MV3100, RHD4CZ7C02MV2400 |
| RHD4CZ7C02MV3300 |  | Testing of Medium Voltage Cables 3Cx 500 mm² - (RD-C-2)-Z7-C02-MV | 15d | 2027-03-04 | 2027-03-24 | RHD4CZ7C02MV3200 |
| RHD4CZ7C02MV3400 |  | Termination of Medium Voltage Cables 3Cx 500 mm² - (RD-C-2)-Z7-C02-MV | 2d | 2027-03-25 | 2027-03-27 | RHD4CZ7C02MV3300 |
|  | 6145 | **RHD4-02-002-C02-(MV)-Normally open Point (Outdoor Type)** |  |  |  |  |
|  | 6144 | **RHD4-02-002-C02-(MV)-Medium Voltage cables 3Cx 50 mm²** |  | 2027-03-25 | 2027-03-27 |  |

| ID | WBS | Task | Duration | Start | Finish | Predecessors |
| --- | --- | --- | --- | --- | --- | --- |
| RHD4CZ7C02MV3401 |  | Termination of Medium Voltage Cables 3Cx 50 mm² - (RD-C-2)-Z7-C02-MV | 2d | 2027-03-25 | 2027-03-27 | RHD4CZ7C02MV3400 SS, RHD4CZ7C02MV3300 |
|  | 1795 | **RHD4-02-002-C02-(MV)-Unit Substations** |  |  |  |  |
|  | 6147 | **RHD4-02-002-Z7-C02-Low Voltage Network - LV** |  | 2027-02-10 | 2027-04-25 |  |
|  | 6148 | **RHD4-02-002-C02-(LV)-Low Voltage duct banks** |  | 2027-02-10 | 2027-03-02 |  |
| RHD4CZ7C02LV2100 |  | Excavation of Duct Banks for Low Voltage Network - (RD-C-2)-Z7-C02-LV | 4d | 2027-02-10 | 2027-02-14 | RHD4ENSDZ7APPLV160, RHD4CZ7C02RW3000, RHD4CZ7C02MV2100 |
| RHD4CZ7C02LV2200 |  | Installation of Duct Banks for Low Voltage Network - (RD-C-2)-Z7-C02-LV | 6d | 2027-02-15 | 2027-02-21 | RHD4PRSHLDOSLV1000, RHD4PRSHLSTAGLV1000, RHD4CZ7C02LV2100 |
| RHD4CZ7C02LV2300 |  | Pouring of Duct Banks for Low Voltage Network - (RD-C-2)-Z7-C02-LV | 4d | 2027-02-23 | 2027-02-27 | RHD4CZ7C02LV2200 |
| RHD4CZ7C02LV2400 |  | Backfilling of Duct Banks for Low Voltage Network - (RD-C-2)-Z7-C02-LV | 3d | 2027-02-28 | 2027-03-02 | RHD4CZ7C02LV2300 |
|  | 6149 | **RHD4-02-002-C02-(LV)-Low Voltage Drawpit** |  | 2027-03-28 | 2027-04-04 |  |
| RHD4CZ7C02LV5100 |  | Excavation of Drawpit size 900x900x1000mm for Low Voltage Network - (RD-C-2)-Z7-C02-LV | 5d | 2027-03-28 | 2027-04-01 | RHD4ENSDZ7APPLV160, RHD4CZ7C02MV3401, RHD4CZ7C02LV2400, RHD4CZ7C02MV1200 |
| RHD4CZ7C02LV5200 |  | Installation of Drawpit size 900x900x1000mm for Low Voltage Network - (RD-C-2)-Z7-C02-LV | 2d | 2027-04-03 | 2027-04-04 | RHD4PRSHLDOSLV1400, RHD4PRSHLSTAGLV1400, RHD4CZ7C02LV5100 |
|  | 6150 | **RHD4-02-002-C02-(LV)-Low Voltage cables** |  | 2027-04-05 | 2027-04-25 |  |
| RHD4CZ7C02LV3100 |  | Excavation for Low Voltage Cables for Low Voltage Network - (RD-C-2)-Z7-C02-LV | 5d | 2027-04-05 | 2027-04-10 | RHD4ENSDZ7APPLV160, RHD4CZ7C02LV5200 |
| RHD4CZ7C02LV3200 |  | Cable Laying of Low Voltage Cables for Low Voltage Network - (RD-C-2)-Z7-C02-LV | 5d | 2027-04-11 | 2027-04-15 | RHD4PRSHLDOSLV1100, RHD4ENMSLV2000, RHD4ENMSLV2010, RHD4PRSHLSTAGLV1100, RHD4CZ7C02LV3100 |
| RHD4CZ7C02LV3300 |  | Warning tape and Backfill for Low Voltage Cables for Low Voltage Network - (RD-C-2)-Z7-C02-LV | 5d | 2027-04-17 | 2027-04-21 | RHD4CZ7C02LV3200 |
| RHD4CZ7C02LV3400 |  | Testing of Low Voltage Cables for Low Voltage Network - (RD-C-2)-Z7-C02-LV | 3d | 2027-04-22 | 2027-04-25 | RHD4CZ7C02LV3300 |
|  | 6153 | **RHD4-02-002-Z7-C02-Street Lighting Network - SL** |  | 2027-02-15 | 2027-06-28 |  |
|  | 6154 | **RHD4-02-002-C02-(SL)-Street Lighting duct banks** |  | 2027-02-15 | 2027-03-24 |  |
| RHD4CZ7C02SL2100 |  | Excavation of Duct Banks for Street Lighting Network - (RD-C-2)-Z7-C02-SL | 7d | 2027-02-15 | 2027-02-23 | RHD4ENSDZ7APPSL170, RHD4CZ7C02LV2100, RHD4CZ7C02LV2100 FF |
| RHD4CZ7C02SL2200 |  | Installation of Duct Banks for Street Lighting Network - (RD-C-2)-Z7-C02-SL | 10d | 2027-02-24 | 2027-03-07 | RHD4PRSHLDOSSL1000, RHD4PRSHLSTAGSL1000, RHD4CZ7C02SL2100, RHD4CZ7C02LV2200 |
| RHD4CZ7C02SL2300 |  | Pouring of Duct Banks for Street Lighting Network - (RD-C-2)-Z7-C02-SL | 7d | 2027-03-08 | 2027-03-18 | RHD4CZ7C02SL2200, RHD4CZ7C02LV2300 |
| RHD4CZ7C02SL2400 |  | Backfilling of Duct Banks for Street Lighting Network - (RD-C-2)-Z7-C02-SL | 5d | 2027-03-20 | 2027-03-24 | RHD4CZ7C02SL2300 |
|  | 6155 | **RHD4-02-002-C02-(SL)-Street Lighting Drawpit** |  | 2027-04-26 | 2027-04-29 |  |
| RHD4CZ7C02SL5100 |  | Excavation of Drawpit size 600x600x900mm for Street Lighting Network - (RD-C-2)-Z7-C02-SL | 2d | 2027-04-26 | 2027-04-27 | RHD4ENSDZ7APPSL170, RHD4CZ7C02SL2300, RHD4CZ7C02LV3400, RHD4CZ7C02IRR3201 |
| RHD4CZ7C02SL5200 |  | Installation of Drawpit size 600x600x900mm for Street Lighting Network - (RD-C-2)-Z7-C02-SL | 2d | 2027-04-28 | 2027-04-29 | RHD4PRSHLDOSSL1400, RHD4PRSHLSTAGSL1400, RHD4CZ7C02SL5100, RHD4CZ7C02IRR3200, RHD4CZ7C02IRR1504 |
|  | 6156 | **RHD4-02-002-C02-(SL)-Street Lighting cables** |  | 2027-05-01 | 2027-06-03 |  |
| RHD4CZ7C02SL3100 |  | Excavation for Street Lighting Cables for Street Lighting Network - (RD-C-2)-Z7-C02-SL | 8d | 2027-05-01 | 2027-05-09 | RHD4ENSDZ7APPSL170, RHD4CZ7C02SL5200 |
| RHD4CZ7C02SL3200 |  | Cable Laying of Street Lighting Cables for Street Lighting Network - (RD-C-2)-Z7-C02-SL | 7d | 2027-05-10 | 2027-05-22 | RHD4PRSHLDOSSL1100, RHD4ENMSSL2000, RHD4ENMSSL2010, RHD4PRSHLSTAGSL1100, RHD4CZ7C02SL3100 |
| RHD4CZ7C02SL3300 |  | Warning tape and Backfill for Street Lighting Cables for Street Lighting Network - (RD-C-2)-Z7-C02-SL | 7d | 2027-05-23 | 2027-05-30 | RHD4CZ7C02SL3200 |
| RHD4CZ7C02SL3400 |  | Testing of Street Lighting Cables for Street Lighting Network - (RD-C-2)-Z7-C02-SL | 4d | 2027-05-31 | 2027-06-03 | RHD4CZ7C02SL3300 |
|  | 6157 | **RHD4-02-002-C02-(SL)-Street Lighting Poles** |  | 2027-06-05 | 2027-06-19 |  |
| RHD4CZ7C02SL1100 |  | Excavation for RC Base for Lighting Poles for Street Lighting Network - (RD-C-2)-Z7-C02-SL | 2d | 2027-06-05 | 2027-06-06 | RHD4ENSDZ7APPSL170, RHD4CZ7C02SL3400 |
| RHD4CZ7C02SL1200 |  | Installation for RC Base for Lighting Poles for Street Lighting Network - (RD-C-2)-Z7-C02-SL | 2d | 2027-06-07 | 2027-06-08 | RHD4CZ7C02SL1100 |
| RHD4CZ7C02SL1300 |  | Backfill for RC Base for Lighting Poles for Street Lighting Network - (RD-C-2)-Z7-C02-SL | 2d | 2027-06-09 | 2027-06-10 | RHD4CZ7C02SL1200 |
| RHD4CZ7C02SL1400 |  | Installation for Lighting Poles for Street Lighting Network - (RD-C-2)-Z7-C02-SL | 3d | 2027-06-12 | 2027-06-14 | RHD4PRSHLDOSSL1200, RHD4ENMSSL2000, RHD4ENMSSL2010, RHD4PRSHLSTAGSL1200, RHD4CZ7C02SL1300 |
| RHD4CZ7C02SL1500 |  | Luminaire Installation for Lighting Poles for Street Lighting Network - (RD-C-2)-Z7-C02-SL | 4d | 2027-06-15 | 2027-06-19 | RHD4PRSHLDOSSL1300, RHD4PRSHLSTAGSL1300, RHD4CZ7C02SL1400 |
|  | 6158 | **RHD4-02-002-C02-(SL)-Street Lighting Feeder Pillars** |  | 2027-06-20 | 2027-06-26 |  |
| RHD4CZ7C02SL4100 |  | Leveling for Distribution Pillars for Street Lighting Network - (RD-C-2)-Z7-C02-SL | 2d | 2027-06-20 | 2027-06-21 | RHD4CZ7C02SL3300, RHD4CZ7C02SL1500, RHD4CZ7A012ICT5200 |
| RHD4CZ7C02SL4200 |  | Lean Concrete for Distribution Pillars for Street Lighting Network - (RD-C-2)-Z7-C02-SL | 2d | 2027-06-22 | 2027-06-23 | RHD4CZ7C02SL4100 |
| RHD4CZ7C02SL4300 |  | Installation of Distribution Pillars for Street Lighting Network - (RD-C-2)-Z7-C02-SL | 2d | 2027-06-24 | 2027-06-26 | RHD4CZ7C02SL4200, RHD4CZ7C02SL1400, RHD4CZ7A012RD5100 |
|  | 6159 | **RHD4-02-002-C02-(SL)-Street Lighting Earthing System** |  | 2027-06-27 | 2027-06-28 |  |
| RHD4CZ7C02SL6100 |  | Installation of Earthing for Lighting Poles and Fedder Pillers for Street Lighting Network - (RD-C-2)-Z7-C02-SL | 2d | 2027-06-27 | 2027-06-28 | RHD4ENMSER2000, RHD4ENMSER2010, RHD4CZ7C02SL4300 |
|  | 6165 | **RHD4-02-002-Z7-C02-Telecommunications Network - TC** |  | 2026-08-23 | 2027-08-04 |  |
|  | 6166 | **RHD4-02-002-C02-(TC)-Telecommunications Ducts** |  | 2027-06-29 | 2027-07-26 |  |
| RHD4CZ7C02TC2100 |  | Excavation of HDPE Ducts for Telecom Network - (RD-C-2)-Z7-C02-TC | 7d | 2027-06-29 | 2027-07-06 | RHD4ENSDZ7APPTC190, RHD4CZ7C02TC3400, RHD4CZ7C02SL6100 |
| RHD4CZ7C02TC2200 |  | Installation of HDPE Ducts for Telecom Network - (RD-C-2)-Z7-C02-TC | 10d | 2027-07-07 | 2027-07-18 | RHD4PRSHLDOSTC1000, RHD4PRSHLSTAGTC1000, RHD4CZ7C02TC2100 |
| RHD4CZ7C02TC2400 |  | Backfilling of HDPE Ducts for Telecom Network - (RD-C-2)-Z7-C02-TC | 7d | 2027-07-19 | 2027-07-26 | RHD4CZ7C02TC2200 |
|  | 6167 | **RHD4-02-002-C02-(TC)-Telecommunications Manholes** |  | 2027-07-27 | 2027-08-04 |  |
| RHD4CZ7C02TC5100 |  | Excavation for Manholes for Telecom Network - (RD-C-2)-Z7-C02-TC | 4d | 2027-07-27 | 2027-07-31 | RHD4ENSDZ7APPTC190, RHD4CZ7C02TC2100, RHD4CZ7C02TC2400 |
| RHD4CZ7C02TC5200 |  | Installation of Manholes for Telecom Network - (RD-C-2)-Z7-C02-TC | 4d | 2027-08-01 | 2027-08-04 | RHD4PRSHLDOSTC1200, RHD4PRSHLSTAGTC1200, RHD4CZ7C02TC5100 |
|  | 6168 | **RHD4-02-002-C02-(TC)-Telecomminications Road Crossings** |  | 2026-08-23 | 2026-08-31 |  |
| RHD4CZ7C02TC3100 |  | Excavation for Road Crossings for Telecom Network - (RD-C-2)-Z7-C02-TC | 2d | 2026-08-23 | 2026-08-24 | RHD4ENSDZ7APPTC190, RHD4CZ7C02ST1109 |
| RHD4CZ7C02TC3200 |  | Installation of Road Crossings for Telecom Network - (RD-C-2)-Z7-C02-TC | 2d | 2026-08-25 | 2026-08-26 | RHD4PRSHLDOSTC1100, RHD4PRSHLSTAGTC1100, RHD4CZ7C02TC3100 |
| RHD4CZ7C02TC3300 |  | Pouring of Road Crossings for Telecom Network - (RD-C-2)-Z7-C02-TC | 2d | 2026-08-27 | 2026-08-29 | RHD4CZ7C02TC3200 |
| RHD4CZ7C02TC3400 |  | Backfilling of Road Crossings for Telecom Network - (RD-C-2)-Z7-C02-TC | 2d | 2026-08-30 | 2026-08-31 | RHD4CZ7C02TC3300 |
|  | 6169 | **RHD4-02-002-Z7-C02-Information and Communication Technologies - ICT** |  | 2026-08-23 | 2027-08-30 |  |
|  | 6170 | **RHD4-02-002-C02-(ICT)-Information and Communication Technologies Ducts** |  | 2027-08-05 | 2027-08-30 |  |
| RHD4CZ7C02ICT2100 |  | Excavation of HDPE Ducts for ICT Network - (RD-C-2)-Z7-C02-ICT | 7d | 2027-08-05 | 2027-08-12 | RHD4ENSDZ7APPICT200, RHD4CZ7C02ICT3400, RHD4CZ7C02TC5200 |
| RHD4CZ7C02ICT2200 |  | Installation of HDPE Ducts for ICT Network - (RD-C-2)-Z7-C02-ICT | 5d | 2027-08-14 | 2027-08-18 | RHD4PRSHLDOSICT1000, RHD4PRSHLSTAGICT1000, RHD4CZ7C02ICT2100 |
| RHD4CZ7C02ICT2400 |  | Backfilling of HDPE Ducts for ICT Network - (RD-C-2)-Z7-C02-ICT | 7d | 2027-08-23 | 2027-08-30 | RHD4CZ7C02ICT2200, RHD4CZ7C02ICT5200 |
|  | 6171 | **RHD4-02-002-C02-(ICT)-Information and Communication Technologies Manholes** |  | 2027-08-14 | 2027-08-22 |  |
| RHD4CZ7C02ICT5100 |  | Excavation for Manholes for ICT Network - (RD-C-2)-Z7-C02-ICT | 4d | 2027-08-14 | 2027-08-17 | RHD4ENSDZ7APPICT200, RHD4CZ7C02ICT2100 |
| RHD4CZ7C02ICT5200 |  | Installation of Manholes for ICT Network - (RD-C-2)-Z7-C02-ICT | 4d | 2027-08-18 | 2027-08-22 | RHD4PRSHLDOSICT1200, RHD4PRSHLSTAGICT1200, RHD4CZ7C02ICT5100 |
|  | 6172 | **RHD4-02-002-C02-(ICT)-Information and Communication Technologies Road Crossings** |  | 2026-08-23 | 2026-08-31 |  |
| RHD4CZ7C02ICT3100 |  | Excavation for Road Crossings for ICT Network - (RD-C-2)-Z7-C02-ICT | 2d | 2026-08-23 | 2026-08-24 | RHD4ENSDZ7APPICT200, RHD4CZ7C02ST1109 |
| RHD4CZ7C02ICT3200 |  | Installation of Road Crossings for ICT Network - (RD-C-2)-Z7-C02-ICT | 2d | 2026-08-25 | 2026-08-26 | RHD4PRSHLDOSICT1100, RHD4PRSHLSTAGICT1100, RHD4CZ7C02ICT3100 |
| RHD4CZ7C02ICT3300 |  | Pouring of Road Crossings for ICT Network - (RD-C-2)-Z7-C02-ICT | 2d | 2026-08-27 | 2026-08-29 | RHD4CZ7C02ICT3200 |
| RHD4CZ7C02ICT3400 |  | Backfilling of Road Crossings for ICT Network - (RD-C-2)-Z7-C02-ICT | 2d | 2026-08-30 | 2026-08-31 | RHD4CZ7C02ICT3300 |
|  | 6160 | **RHD4-02-002-Z7-C02-Landscape Network - LS** |  |  |  |  |
|  | 6161 | **RHD4-02-002-C02-(LS)-Landscape Lighting cables** |  |  |  |  |

| ID | WBS | Task | Duration | Start | Finish | Predecessors |
| --- | --- | --- | --- | --- | --- | --- |
|  | 6163 | **RHD4-02-002-C02-(LS)-Landscape Bollard Poles** |  |  |  |  |
|  | 6173 | **RHD4-02-002-Z7-C02-Security Network - CCTV** |  | 2027-08-31 | 2027-10-03 |  |
|  | 6174 | **RHD4-02-002-C02-(CCTV)-Civil Works** |  | 2027-08-31 | 2027-09-09 |  |
| RHD4CZ7C02CCTV2100 |  | Civil Works for Security Network - (RD-C-2)-Z7-C02-CCTV | 9d | 2027-08-31 | 2027-09-09 | RHD4CZ7C02ICT2400 |
|  | 6175 | **RHD4-02-002-C02-(CCTV)-CCTV Poles** |  | 2027-09-11 | 2027-09-19 |  |
| RHD4CZ7C02CCTV1100 |  | Excavation for RC Base for CCTV Poles for Security Network - (RD-C-2)-Z7-C02-CCTV | 2d | 2027-09-11 | 2027-09-12 | RHD4ENSDZ7APPCCTV210, RHD4CZ7C02CCTV2100 |
| RHD4CZ7C02CCTV1200 |  | Installation for RC Base for CCTV Poles for Security Network - (RD-C-2)-Z7-C02-CCTV | 2d | 2027-09-13 | 2027-09-14 | RHD4CZ7C02CCTV1100 |
| RHD4CZ7C02CCTV1300 |  | Backfill for RC Base for CCTV Poles for Security Network - (RD-C-2)-Z7-C02-CCTV | 2d | 2027-09-15 | 2027-09-16 | RHD4CZ7C02CCTV1200 |
| RHD4CZ7C02CCTV1400 |  | Installation for CCTV Poles for Security Network - (RD-C-2)-Z7-C02-CCTV | 2d | 2027-09-18 | 2027-09-19 | RHD4PRSHLDOSCCTV1000, RHD4PRSHLSTACCTV1000, RHD4CZ7C02CCTV1300 |
|  | 6176 | **RHD4-02-002-C02-(CCTV)-Camera** |  | 2027-09-20 | 2027-09-21 |  |
| RHD4CZ7C02CCTV3100 |  | Installation for Cameras for Security Network - (RD-C-2)-Z7-C02-CCTV | 2d | 2027-09-20 | 2027-09-21 | RHD4PRSHLDOSCCTV1100, RHD4PRSHLSTACCTV1100, RHD4CZ7C02CCTV1400 |
|  | 6177 | **RHD4-02-002-C02-(CCTV)-Power and Infrastructure** |  | 2027-09-29 | 2027-10-03 |  |
| RHD4CZ7C02CCTV4100 |  | Installation of Power outlet, UPS and midspan for PTZ Camerafor Cameras for Security Network - (RD-C-2)-Z7-C02-CCTV | 2d | 2027-09-29 | 2027-09-30 | RHD4PRSHLDOSCCTV1300, RHD4PRSHLSTACCTV1300, RHD4CZ7C02CCTV1400, RHD4CZ7C02CCTV6100 |
| RHD4CZ7C02CCTV4200 |  | Short Range Wireless PoP wireless Bridgefor CCTV Poles for Security Network - (RD-C-2)-Z7-C02-CCTV | 2d | 2027-10-02 | 2027-10-03 | RHD4CZ7C02CCTV4100, RHD4CZ7C02CCTV4100 FF |
|  | 6179 | **RHD4-02-002-C02-(CCTV)-CCTV Panels and Components** |  | 2027-09-22 | 2027-09-28 |  |
| RHD4CZ7C02CCTV6100 |  | Installation for CCTV Panels for Security Network - (RD-C-2)-Z7-C02-CCTV | 5d | 2027-09-22 | 2027-09-28 | RHD4PRSHLDOSCCTV1200, RHD4PRSHLSTACCTV1200, RHD4PRLOLSTACCTV1001, RHD4CZ7C02CCTV3100 |
|  | 5623 | **RHD4-02-002-Z7-RA03** |  | 2026-08-05 | 2027-10-06 |  |
|  | 5802 | **RHD4-02-002-Z7-RA03-Road Works - RD** |  | 2026-09-01 | 2027-10-06 |  |
|  | 5803 | **RHD4-02-002-RA03-(RD)-Subgrade** |  | 2026-09-01 | 2026-09-03 |  |
| RHD4CZ7RA03RD1100 |  | Supply, lay and compaction subgrade compacted thickness 300 mm for Roads - (ROUND-03)-Z7-RA03-RD | 3d | 2026-09-01 | 2026-09-03 | RHD4ENSDZ7APPEW100, RHD4ENSDZ7APPRD220, RHD4CZ7C02RD1100 SS, RHD4CZ7RA03TC3400 |
|  | 5804 | **RHD4-02-002-RA03-(RD)-Aggregate Base Course** |  | 2026-09-05 | 2026-09-07 |  |
| RHD4CZ7RA03RD2100 |  | Supply, lay and compaction Aggregate base course compacted thickness 300 mmfor Roads - (ROUND-03)-Z7-RA03-RD | 3d | 2026-09-05 | 2026-09-07 | RHD4PRSHLDOSRD1000, RHD4PRSHLSTAGRD1000, RHD4CZ7RA03RD1100 |
|  | 5805 | **RHD4-02-002-RA03-(RD)-Bituminous base course Two Layers, including (MC1)&(RC2)** |  | 2026-09-08 | 2027-08-26 |  |
| RHD4CZ7RA03RD3100 |  | Supply, lay and Asphaltic base course including Prime Coat (MC1) for 1st Layer - (ROUND-03)-Z7-RA03-RD | 3d | 2026-09-08 | 2026-09-10 | RHD4PRSHLDOSRD1100, RHD4ENMSASPH2000, RHD4ENMSASPH2010, RHD4PRSHLSTAGRD1100, RHD4CZ7RA03RD2100 |
| RHD4CZ7RA03RD3200 |  | Supply, lay and Asphaltic base course including Tack Coat (RC2) for 2nd Layer - (ROUND-03)-Z7-RA03-RD | 3d | 2027-08-24 | 2027-08-26 | RHD4PRSHLDOSRD1100, RHD4PRSHLSTAGRD1100, RHD4CZ7RA03CCTV6100 |
|  | 5807 | **RHD4-02-002-RA03-(RD)-Precast Concrete Curb** |  | 2027-08-28 | 2027-09-01 |  |
| RHD4CZ7RA03RD5100 |  | Supply and installation Precast Concrete Kerb for Roads - (ROUND-03)-Z7-RA03-RD | 5d | 2027-08-28 | 2027-09-01 | RHD4PRSHLDOSRD1200, RHD4ENMSRD2000, RHD4ENMSRD2010, RHD4PRSHLSTAGRD1200, RHD4CZ7RA03RD3200 |
|  | 5810 | **RHD4-02-002-RA03-(RD)-Traffic Signage** |  | 2027-09-02 | 2027-09-13 |  |
| RHD4CZ7RA03RD8100 |  | Installation of Traffic Signage for Road Network - (ROUND-03)-Z7-RA03-RD | 10d | 2027-09-02 | 2027-09-13 | RHD4PRSHLDOSRD1600, RHD4PRSHLSTAGRD1600, RHD4CZ7RA03RD5100 |
|  | 5808 | **RHD4-02-002-RA03-(RD)-Precast Interlocking Block Pavers** |  |  |  |  |
|  | 5806 | **RHD4-02-002-RA03-(RD)-Bituminous concrete wearing course including tack coat (RC2)** |  | 2027-09-14 | 2027-09-15 |  |
| RHD4CZ7RA03RD4100 |  | Supply, lay and compaction Asphaltic wearing course including tack Coat (RC2)for Road Network - (ROUND-03)-Z7-RA03-RD | 2d | 2027-09-14 | 2027-09-15 | RHD4CZ7RA03RD5100, RHD4CZ7RA03RD8100 |
|  | 5811 | **RHD4-02-002-RA03-(RD)-Speed Table and Wheel Stopper** |  | 2027-09-16 | 2027-09-30 |  |
| RHD4CZ7RA03RD9100 |  | Installation for Speed Bump for Road Network - (ROUND-03)-Z7-RA03-RD | 12d | 2027-09-16 | 2027-09-30 | RHD4CZ7RA03RD4100 |
|  | 5809 | **RHD4-02-002-RA03-(RD)-Pavement Marking** |  | 2027-10-02 | 2027-10-06 |  |
| RHD4CZ7RA03RD7100 |  | Pavement Markings for Road Network - (ROUND-03)-Z7-RA03-RD | 5d | 2027-10-02 | 2027-10-06 | RHD4PRSHLDOSRD1500, RHD4PRSHLSTAGRD1500, RHD4CZ7RA03RD9100, RHD4CZ5A014RD7100 |
|  | 5627 | **RHD4-02-002-Z7-RA03-Storm Network - ST** |  |  |  |  |
|  | 5646 | **RHD4-02-002-RA03-(ST)-MH Works - 2000 mm diameter** |  |  |  |  |
|  | 5645 | **RHD4-02-002-RA03-(ST)-MH Works - 1500 mm diameter** |  |  |  |  |
|  | 5644 | **RHD4-02-002-RA03-(ST)-MH Works - 1200 mm diameter** |  |  |  |  |
|  | 5635 | **RHD4-02-002-RA03-(ST)-GRP Pipes - 1100 mm diameter** |  |  |  |  |
|  | 5633 | **RHD4-02-002-RA03-(ST)-GRP Pipes - 900 mm diameter** |  |  |  |  |
|  | 5632 | **RHD4-02-002-RA03-(ST)-GRP Pipes - 800 mm diameter** |  |  |  |  |
|  | 5629 | **RHD4-02-002-RA03-(ST)-GRP Pipes - 500 mm diameter** |  |  |  |  |
|  | 5643 | **RHD4-02-002-RA03-(ST)-UPVC Pipes - 400 mm diameter** |  |  |  |  |
|  | 5642 | **RHD4-02-002-RA03-(ST)-UPVC Pipes - 300 mm diameter** |  |  |  |  |
|  | 5650 | **RHD4-02-002-RA03-(ST)-Concrete Encasement** |  |  |  |  |
|  | 5651 | **RHD4-02-002-Z7-RA03-Catch Basin - ST** |  |  |  |  |
|  | 5652 | **RHD4-02-002-RA03-(ST)-Single Catch Basin Works** |  |  |  |  |
|  | 5653 | **RHD4-02-002-RA03-(ST)-Double Catch Basin Works** |  |  |  |  |
|  | 5762 | **RHD4-02-002-Z7-RA03-Medium Voltage Network - MV** |  | 2026-09-12 | 2026-10-01 |  |
|  | 5765 | **RHD4-02-002-RA03-(MV)-Medium Voltage cables 3Cx 500 mm²** |  |  |  |  |
|  | 1979 | **RHD4-02-002-RA03-(MV)-Medium Voltage cable trench** |  |  |  |  |
|  | 5766 | **RHD4-02-002-RA03-(MV)-Medium Voltage cables 3Cx 50 mm²** |  | 2026-09-12 | 2026-09-15 |  |
| RHD4CZ7RA03MV3101 |  | Installation of Medium Voltage Cables 3Cx 50 mm² - (ROUND-03)-Z7-RA03-MV | 2d | 2026-09-12 | 2026-09-13 | RHD4PRSHLDOSMV1200, RHD4ENMSMV2000, RHD4ENMSMV2010, RHD4PRSHLSTAGMV1200, RHD4CZ7RA03RD3100 |
| RHD4CZ7RA03MV3301 |  | Testing of Medium Voltage Cables 3Cx 50 mm² - (ROUND-03)-Z7-RA03-MV | 2d | 2026-09-14 | 2026-09-15 | RHD4CZ7RA03MV3101 |
|  | 5768 | **RHD4-02-002-RA03-(MV)-Unit Substations** |  | 2026-09-16 | 2026-10-01 |  |
| RHD4CZ7RA03MV5100 |  | Excavation for Unit Substations for Medium Voltage Network - (ROUND-03)-Z7-RA03-MV | 2d | 2026-09-16 | 2026-09-17 | RHD4ENSDZ7APPMV150, RHD4CZ7RA03MV3301 |
| RHD4CZ7RA03MV5200 |  | Concrete Base Placement for Unit Substations for Medium Voltage Network - (ROUND-03)-Z7-RA03-MV | 2d | 2026-09-19 | 2026-09-20 | RHD4CZ7RA03MV5100 |
| RHD4CZ7RA03MV5300 |  | Installation for Fences and doors for Medium Voltage Network - (ROUND-03)-Z7-RA03-MV | 5d | 2026-09-21 | 2026-09-27 | RHD4CZ7RA03MV5200 |
| RHD4CZ7RA03MV5400 |  | Installation for Unit Substations for Medium Voltage Network - (ROUND-03)-Z7-RA03-MV | 4d | 2026-09-28 | 2026-10-01 | RHD4PRLOLSTAGMV1601, RHD4PRLOLSTAGMV1602, RHD4CZ7RA03MV5300 |
|  | 5769 | **RHD4-02-002-Z7-RA03-Low Voltage Network - LV** |  | 2027-05-24 | 2027-06-08 |  |
|  | 5770 | **RHD4-02-002-RA03-(LV)-Low Voltage duct banks** |  |  |  |  |
|  | 5771 | **RHD4-02-002-RA03-(LV)-Low Voltage Drawpit** |  |  |  |  |
|  | 5772 | **RHD4-02-002-RA03-(LV)-Low Voltage cables** |  | 2027-05-24 | 2027-06-01 |  |
| RHD4CZ7RA03LV3100 |  | Excavation for Low Voltage Cables for Low Voltage Network - (ROUND-03)-Z7-RA03-LV | 2d | 2027-05-24 | 2027-05-25 | RHD4ENSDZ7APPLV160, RHD4CZ7RA03MV5400, RHD4CZ7L015SL5100 |
| RHD4CZ7RA03LV3200 |  | Cable Laying of Low Voltage Cables for Low Voltage Network - (ROUND-03)-Z7-RA03-LV | 2d | 2027-05-26 | 2027-05-27 | RHD4PRSHLDOSLV1100, RHD4ENMSLV2000, RHD4ENMSLV2010, RHD4PRSHLSTAGLV1100, RHD4CZ7RA03LV3100 |
| RHD4CZ7RA03LV3300 |  | Warning tape and Backfill for Low Voltage Cables for Low Voltage Network - (ROUND-03)-Z7-RA03-LV | 2d | 2027-05-29 | 2027-05-30 | RHD4CZ7RA03LV3200 |
| RHD4CZ7RA03LV3400 |  | Testing of Low Voltage Cables for Low Voltage Network - (ROUND-03)-Z7-RA03-LV | 2d | 2027-05-31 | 2027-06-01 | RHD4CZ7RA03LV3300 |
|  | 5773 | **RHD4-02-002-RA03-(LV)-Low Voltage Distribution Pillars** |  | 2027-06-02 | 2027-06-08 |  |

| ID | WBS | Task | Duration | Start | Finish | Predecessors |
| --- | --- | --- | --- | --- | --- | --- |
| RHD4CZ7RA03LV4100 |  | Leveling for Distribution Pillars for Low Voltage Network - (ROUND-03)-Z7-RA03-LV | 2d | 2027-06-02 | 2027-06-03 | RHD4CZ7RA03LV3400 |
| RHD4CZ7RA03LV4200 |  | Lean Concrete for Distribution Pillars for Low Voltage Network - (ROUND-03)-Z7-RA03-LV | 2d | 2027-06-05 | 2027-06-06 | RHD4CZ7RA03LV4100 |
| RHD4CZ7RA03LV4300 |  | Installation of Distribution Pillars for Low Voltage Network - (ROUND-03)-Z7-RA03-LV | 2d | 2027-06-07 | 2027-06-08 | RHD4PRSHLDOSLV1200, RHD4PRSHLDOSLV1300, RHD4PRSHLSTAGLV1200, RHD4PRSHLSTAGLV1300, RHD4CZ7RA03LV4200 |
|  | 5774 | **RHD4-02-002-RA03-(LV)-Low Voltage Distribution Pillars Earthing** |  |  |  |  |
|  | 5775 | **RHD4-02-002-Z7-RA03-Street Lighting Network - SL** |  | 2027-03-25 | 2027-05-22 |  |
|  | 5776 | **RHD4-02-002-RA03-(SL)-Street Lighting duct banks** |  | 2027-03-25 | 2027-04-12 |  |
| RHD4CZ7RA03SL2100 |  | Excavation of Duct Banks for Street Lighting Network - (ROUND-03)-Z7-RA03-SL | 4d | 2027-03-25 | 2027-03-29 | RHD4ENSDZ7APPSL170, RHD4CZ7RA03RA3000, RHD4CZ7C02SL2400 |
| RHD4CZ7RA03SL2200 |  | Installation of Duct Banks for Street Lighting Network - (ROUND-03)-Z7-RA03-SL | 5d | 2027-03-30 | 2027-04-04 | RHD4PRSHLDOSSL1000, RHD4PRSHLSTAGSL1000, RHD4CZ7RA03SL2100 |
| RHD4CZ7RA03SL2300 |  | Pouring of Duct Banks for Street Lighting Network - (ROUND-03)-Z7-RA03-SL | 4d | 2027-04-05 | 2027-04-08 | RHD4CZ7RA03SL2200 |
| RHD4CZ7RA03SL2400 |  | Backfilling of Duct Banks for Street Lighting Network - (ROUND-03)-Z7-RA03-SL | 3d | 2027-04-10 | 2027-04-12 | RHD4CZ7RA03SL2300 |
|  | 5777 | **RHD4-02-002-RA03-(SL)-Street Lighting Drawpit** |  | 2027-04-13 | 2027-04-17 |  |
| RHD4CZ7RA03SL5100 |  | Excavation of Drawpit size 600x600x900mm for Street Lighting Network - (ROUND-03)-Z7-RA03-SL | 2d | 2027-04-13 | 2027-04-14 | RHD4ENSDZ7APPSL170, RHD4CZ7RA03SL2400 |
| RHD4CZ7RA03SL5200 |  | Installation of Drawpit size 600x600x900mm for Street Lighting Network - (ROUND-03)-Z7-RA03-SL | 2d | 2027-04-15 | 2027-04-17 | RHD4PRSHLDOSSL1400, RHD4PRSHLSTAGSL1400, RHD4CZ7RA03SL5100 |
|  | 5778 | **RHD4-02-002-RA03-(SL)-Street Lighting cables** |  | 2027-04-18 | 2027-04-26 |  |
| RHD4CZ7RA03SL3100 |  | Excavation for Street Lighting Cables for Street Lighting Network - (ROUND-03)-Z7-RA03-SL | 2d | 2027-04-18 | 2027-04-19 | RHD4ENSDZ7APPSL170, RHD4CZ7RA03SL5200 |
| RHD4CZ7RA03SL3200 |  | Cable Laying of Street Lighting Cables for Street Lighting Network - (ROUND-03)-Z7-RA03-SL | 2d | 2027-04-20 | 2027-04-21 | RHD4PRSHLDOSSL1100, RHD4ENMSSL2000, RHD4ENMSSL2010, RHD4PRSHLSTAGSL1100, RHD4CZ7RA03SL3100 |
| RHD4CZ7RA03SL3300 |  | Warning tape and Backfill for Street Lighting Cables for Street Lighting Network - (ROUND-03)-Z7-RA03-SL | 2d | 2027-04-22 | 2027-04-24 | RHD4CZ7RA03SL3200 |
| RHD4CZ7RA03SL3400 |  | Testing of Street Lighting Cables for Street Lighting Network - (ROUND-03)-Z7-RA03-SL | 2d | 2027-04-25 | 2027-04-26 | RHD4CZ7RA03SL3300 |
|  | 5779 | **RHD4-02-002-RA03-(SL)-Street Lighting Poles** |  | 2027-04-27 | 2027-05-08 |  |
| RHD4CZ7RA03SL1100 |  | Excavation for RC Base for Lighting Poles for Street Lighting Network - (ROUND-03)-Z7-RA03-SL | 2d | 2027-04-27 | 2027-04-28 | RHD4ENSDZ7APPSL170, RHD4CZ7RA03SL3400 |
| RHD4CZ7RA03SL1200 |  | Installation for RC Base for Lighting Poles for Street Lighting Network - (ROUND-03)-Z7-RA03-SL | 2d | 2027-04-29 | 2027-05-01 | RHD4CZ7RA03SL1100 |
| RHD4CZ7RA03SL1300 |  | Backfill for RC Base for Lighting Poles for Street Lighting Network - (ROUND-03)-Z7-RA03-SL | 2d | 2027-05-02 | 2027-05-03 | RHD4CZ7RA03SL1200 |
| RHD4CZ7RA03SL1400 |  | Installation for Lighting Poles for Street Lighting Network - (ROUND-03)-Z7-RA03-SL | 2d | 2027-05-04 | 2027-05-05 | RHD4PRSHLDOSSL1200, RHD4ENMSSL2000, RHD4ENMSSL2010, RHD4PRSHLSTAGSL1200, RHD4CZ7RA03SL1300 |
| RHD4CZ7RA03SL1500 |  | Luminaire Installation for Lighting Poles for Street Lighting Network - (ROUND-03)-Z7-RA03-SL | 2d | 2027-05-06 | 2027-05-08 | RHD4PRSHLDOSSL1300, RHD4PRSHLSTAGSL1300, RHD4CZ7RA03SL1400 |
|  | 5780 | **RHD4-02-002-RA03-(SL)-Street Lighting Feeder Pillars** |  | 2027-05-09 | 2027-05-19 |  |
| RHD4CZ7RA03SL4100 |  | Leveling for Distribution Pillars for Street Lighting Network - (ROUND-03)-Z7-RA03-SL | 2d | 2027-05-09 | 2027-05-10 | RHD4CZ7RA03SL1500 |
| RHD4CZ7RA03SL4200 |  | Lean Concrete for Distribution Pillars for Street Lighting Network - (ROUND-03)-Z7-RA03-SL | 2d | 2027-05-11 | 2027-05-12 | RHD4CZ7RA03SL4100 |
| RHD4CZ7RA03SL4300 |  | Installation of Distribution Pillars for Street Lighting Network - (ROUND-03)-Z7-RA03-SL | 2d | 2027-05-13 | 2027-05-19 | RHD4CZ7RA03SL4200 |
|  | 5781 | **RHD4-02-002-RA03-(SL)-Street Lighting Earthing System** |  | 2027-05-20 | 2027-05-22 |  |
| RHD4CZ7RA03SL6100 |  | Installation of Earthing for Lighting Poles and Fedder Pillers for Street Lighting Network - (ROUND-03)-Z7-RA03-SL | 2d | 2027-05-20 | 2027-05-22 | RHD4ENMSER2000, RHD4ENMSER2010, RHD4CZ7RA03SL4300 |
|  | 489 | **RHD4-02-002-Z7-RA03-Telecommunications Network - TC** |  | 2026-08-05 | 2027-06-07 |  |
|  | 490 | **RHD4-02-002-C081-(TC)-Telecommunications Ducts** |  | 2027-05-23 | 2027-06-07 |  |
| RHD4CZ7RA03TC2100 |  | Excavation of HDPE Ducts for Telecom Network - (ROUND-03)-Z7-RA03-TC | 3d | 2027-05-23 | 2027-05-25 | RHD4CZ7RA03SL6100 |
| RHD4CZ7RA03TC2200 |  | Installation of HDPE Ducts for Telecom Network - (ROUND-03)-Z7-RA03-TC | 5d | 2027-05-26 | 2027-05-31 | RHD4CZ7RA03TC2100 |
| RHD4CZ7RA03TC2400 |  | Backfilling of HDPE Ducts for Telecom Network - (ROUND-03)-Z7-RA03-TC | 3d | 2027-06-05 | 2027-06-07 | RHD4CZ7RA03TC2200, RHD4CZ7RA03TC5200 |
|  | 491 | **RHD4-02-002-C081-(TC)-Telecommunications Manholes** |  | 2027-05-26 | 2027-06-03 |  |
| RHD4CZ7RA03TC5100 |  | Excavation for Manholes for Telecom Network - (ROUND-03)-Z7-RA03-TC | 4d | 2027-05-26 | 2027-05-30 | RHD4CZ7RA03TC2100, RHD4CZ7RA03TC2100 FF |
| RHD4CZ7RA03TC5200 |  | Installation of Manholes for Telecom Network - (ROUND-03)-Z7-RA03-TC | 4d | 2027-05-31 | 2027-06-03 | RHD4CZ7RA03TC5100, RHD4CZ7RA03TC2200 SS |
|  | 5411 | **RHD4-02-002-C081-(TC)-Telecomminications Road Crossings** |  | 2026-08-05 | 2026-08-13 |  |
| RHD4CZ7RA03TC3100 |  | Excavation for Road Crossings for Telecom Network - (ROUND-03)-Z7-RA03-TC | 2d | 2026-08-05 | 2026-08-06 | RHD4PRSHLDOSTC1200 |
| RHD4CZ7RA03TC3200 |  | Installation of Road Crossings for Telecom Network - (ROUND-03)-Z7-RA03-TC | 2d | 2026-08-08 | 2026-08-09 | RHD4CZ7RA03TC3100 |
| RHD4CZ7RA03TC3300 |  | Pouring of Road Crossings for Telecom Network - (ROUND-03)-Z7-RA03-TC | 2d | 2026-08-10 | 2026-08-11 | RHD4CZ7RA03TC3200 |
| RHD4CZ7RA03TC3400 |  | Backfilling of Road Crossings for Telecom Network - (ROUND-03)-Z7-RA03-TC | 2d | 2026-08-12 | 2026-08-13 | RHD4CZ7RA03TC3300 |
|  | 5791 | **RHD4-02-002-Z7-RA03-Information and Communication Technologies - ICT** |  | 2027-05-23 | 2027-06-06 |  |
|  | 5792 | **RHD4-02-002-RA03-(ICT)-Information and Communication Technologies Ducts** |  | 2027-05-23 | 2027-06-06 |  |
| RHD4CZ7RA03ICT2100 |  | Excavation of HDPE Ducts for ICT Network - (ROUND-03)-Z7-RA03-ICT | 4d | 2027-05-23 | 2027-05-26 | RHD4ENSDZ7APPICT200, RHD4CZ7RA03SL6100 |
| RHD4CZ7RA03ICT2200 |  | Installation of HDPE Ducts for ICT Network - (ROUND-03)-Z7-RA03-ICT | 5d | 2027-05-27 | 2027-06-01 | RHD4PRSHLDOSICT1000, RHD4PRSHLSTAGICT1000, RHD4CZ7RA03ICT2100 |
| RHD4CZ7RA03ICT2400 |  | Backfilling of HDPE Ducts for ICT Network - (ROUND-03)-Z7-RA03-ICT | 4d | 2027-06-02 | 2027-06-06 | RHD4CZ7RA03ICT2200 |
|  | 5782 | **RHD4-02-002-Z7-RA03-Landscape Network - LS** |  |  |  |  |
|  | 5783 | **RHD4-02-002-RA03-(LS)-Landscape Lighting cables** |  |  |  |  |
|  | 5785 | **RHD4-02-002-RA03-(LS)-Landscape Bollard Poles** |  |  |  |  |
|  | 5795 | **RHD4-02-002-Z7-RA03-Security Network - CCTV** |  | 2027-06-08 | 2027-08-23 |  |
|  | 5796 | **RHD4-02-002-RA03-(CCTV)-Civil Works** |  | 2027-06-08 | 2027-06-19 |  |
| RHD4CZ7RA03CCTV2100 |  | Civil Works for Security Network - (ROUND-03)-Z7-RA03-CCTV | 10d | 2027-06-08 | 2027-06-19 | RHD4CZ7RA03ICT2400, RHD4CZ7RA03TC2400 |
|  | 5797 | **RHD4-02-002-RA03-(CCTV)-CCTV Poles** |  | 2027-08-01 | 2027-08-11 |  |
| RHD4CZ7RA03CCTV1100 |  | Excavation for RC Base for CCTV Poles for Security Network - (ROUND-03)-Z7-RA03-CCTV | 2d | 2027-08-01 | 2027-08-02 | RHD4ENSDZ7APPCCTV210, RHD4CZ7RA03CCTV2100, RHD4CZ7L131CCTV2100 |
| RHD4CZ7RA03CCTV1200 |  | Installation for RC Base for CCTV Poles for Security Network - (ROUND-03)-Z7-RA03-CCTV | 2d | 2027-08-03 | 2027-08-04 | RHD4CZ7RA03CCTV1100 |
| RHD4CZ7RA03CCTV1300 |  | Backfill for RC Base for CCTV Poles for Security Network - (ROUND-03)-Z7-RA03-CCTV | 2d | 2027-08-05 | 2027-08-07 | RHD4CZ7RA03CCTV1200 |
| RHD4CZ7RA03CCTV1400 |  | Installation for CCTV Poles for Security Network - (ROUND-03)-Z7-RA03-CCTV | 2d | 2027-08-08 | 2027-08-09 | RHD4PRSHLDOSCCTV1000, RHD4PRSHLSTACCTV1000, RHD4CZ7RA03CCTV1300 |
| RHD4CZ7RA03CCTV1500 |  | Protection post Installation for CCTV Poles for Security Network - (ROUND-03)-Z7-RA03-CCTV | 2d | 2027-08-10 | 2027-08-11 | RHD4CZ7RA03CCTV1400 |
|  | 5798 | **RHD4-02-002-RA03-(CCTV)-Camera** |  | 2027-08-12 | 2027-08-14 |  |
| RHD4CZ7RA03CCTV3100 |  | Installation for Cameras for Security Network - (ROUND-03)-Z7-RA03-CCTV | 2d | 2027-08-12 | 2027-08-14 | RHD4PRSHLDOSCCTV1100, RHD4PRSHLSTACCTV1100, RHD4CZ7RA03CCTV1400, RHD4CZ7RA03CCTV4100 |
|  | 5799 | **RHD4-02-002-RA03-(CCTV)-Power and Infrastructure** |  | 2027-08-10 | 2027-08-14 |  |
| RHD4CZ7RA03CCTV4100 |  | Installation of Power outlet, UPS and midspan for PTZ Camerafor Cameras for Security Network - (ROUND-03)-Z7-RA03-CCTV | 2d | 2027-08-10 | 2027-08-11 | RHD4PRSHLDOSCCTV1300, RHD4PRSHLSTACCTV1300, RHD4CZ7RA03CCTV1400 |
| RHD4CZ7RA03CCTV4200 |  | Short Range Wireless PoP wireless Bridgefor CCTV Poles for Security Network - (ROUND-03)-Z7-RA03-CCTV | 2d | 2027-08-12 | 2027-08-14 | RHD4CZ7RA03CCTV4100 |
|  | 5801 | **RHD4-02-002-RA03-(CCTV)-CCTV Panels and Components** |  | 2027-08-15 | 2027-08-23 |  |
| RHD4CZ7RA03CCTV6100 |  | Installation for CCTV Panels for Security Network - (ROUND-03)-Z7-RA03-CCTV | 8d | 2027-08-15 | 2027-08-23 | RHD4PRSHLDOSCCTV1200, RHD4PRSHLSTACCTV1200, RHD4PRLOLSTACCTV1001, RHD4CZ7RA03CCTV4200, RHD4CZ7RA03CCTV3100 |
|  | 5812 | **RHD4-02-002-Z7-RA05** |  | 2026-08-31 | 2027-06-16 |  |
|  | 5991 | **RHD4-02-002-Z7-RA05-Road Works - RD** |  | 2026-09-01 | 2027-06-16 |  |
|  | 5992 | **RHD4-02-002-RA05-(RD)-Subgrade** |  | 2026-09-01 | 2026-09-05 |  |

| ID | WBS | Task | Duration | Start | Finish | Predecessors |
| --- | --- | --- | --- | --- | --- | --- |
| RHD4CZ7RA05RD1100 |  | Supply, lay and compaction subgrade compacted thickness 300 mm for Roads - (ROUND-05)-Z7-RA05-RD | 4d | 2026-09-01 | 2026-09-05 | RHD4ENSDZ7APPEW100, RHD4ENSDZ7APPRD220, RHD4CZ7RA03RD1100 SS |
|  | 5993 | **RHD4-02-002-RA05-(RD)-Aggregate Base Course** |  | 2026-09-06 | 2026-09-09 |  |
| RHD4CZ7RA05RD2100 |  | Supply, lay and compaction Aggregate base course compacted thickness 300 mmfor Roads - (ROUND-05)-Z7-RA05-RD | 4d | 2026-09-06 | 2026-09-09 | RHD4PRSHLDOSRD1000, RHD4PRSHLSTAGRD1000, RHD4CZ7RA05RD1100 |
|  | 5994 | **RHD4-02-002-RA05-(RD)-Bituminous base course Two Layers, including (MC1)&(RC2)** |  | 2026-09-10 | 2027-05-27 |  |
| RHD4CZ7RA05RD3100 |  | Supply, lay and Asphaltic base course including Prime Coat (MC1) for 1st Layer - (ROUND-05)-Z7-RA05-RD | 2d | 2026-09-10 | 2026-09-12 | RHD4PRSHLDOSRD1100, RHD4ENMSASPH2000, RHD4ENMSASPH2010, RHD4PRSHLSTAGRD1100, RHD4CZ7RA05RD2100 |
| RHD4CZ7RA05RD3200 |  | Supply, lay and Asphaltic base course including Tack Coat (RC2) for 2nd Layer - (ROUND-05)-Z7-RA05-RD | 2d | 2027-05-26 | 2027-05-27 | RHD4PRSHLDOSRD1100, RHD4PRSHLSTAGRD1100, RHD4CZ7RA05ICT2400, RHD4CZ7L015SL5200 |
|  | 5996 | **RHD4-02-002-RA05-(RD)-Precast Concrete Curb** |  | 2027-05-29 | 2027-06-01 |  |
| RHD4CZ7RA05RD5100 |  | Supply and installation Precast Concrete Kerb for Roads - (ROUND-05)-Z7-RA05-RD | 4d | 2027-05-29 | 2027-06-01 | RHD4PRSHLDOSRD1200, RHD4ENMSRD2000, RHD4ENMSRD2010, RHD4PRSHLSTAGRD1200, RHD4CZ7RA05RD3200 |
|  | 5999 | **RHD4-02-002-RA05-(RD)-Traffic Signage** |  | 2027-06-02 | 2027-06-12 |  |
| RHD4CZ7RA05RD8100 |  | Installation of Traffic Signage for Road Network - (ROUND-05)-Z7-RA05-RD | 9d | 2027-06-02 | 2027-06-12 | RHD4PRSHLDOSRD1600, RHD4PRSHLSTAGRD1600, RHD4CZ7RA05RD5100, RHD4CZ7RA05ICT2400, RHD4CZ7C02IRR3202 |
|  | 5997 | **RHD4-02-002-RA05-(RD)-Precast Interlocking Block Pavers** |  |  |  |  |
|  | 5995 | **RHD4-02-002-RA05-(RD)-Bituminous concrete wearing course including tack coat (RC2)** |  | 2027-06-02 | 2027-06-03 |  |
| RHD4CZ7RA05RD4100 |  | Supply, lay and compaction Asphaltic wearing course including tack Coat (RC2)for Road Network - (ROUND-05)-Z7-RA05-RD | 2d | 2027-06-02 | 2027-06-03 | RHD4CZ7RA05RD5100 |
|  | 6000 | **RHD4-02-002-RA05-(RD)-Speed Table and Wheel Stopper** |  | 2027-06-05 | 2027-06-13 |  |
| RHD4CZ7RA05RD9100 |  | Installation for Speed Bump for Road Network - (ROUND-05)-Z7-RA05-RD | 8d | 2027-06-05 | 2027-06-13 | RHD4CZ7RA05RD4100 |
|  | 5998 | **RHD4-02-002-RA05-(RD)-Pavement Marking** |  | 2027-06-14 | 2027-06-16 |  |
| RHD4CZ7RA05RD7100 |  | Pavement Markings for Road Network - (ROUND-05)-Z7-RA05-RD | 3d | 2027-06-14 | 2027-06-16 | RHD4PRSHLDOSRD1500, RHD4PRSHLSTAGRD1500, RHD4CZ7RA05RD9100 |
|  | 1789 | **RHD4-02-002-Z7-RA05-Medium Voltage Network - MV** |  |  |  |  |
|  | 1790 | **RHD4-02-002-RA05-(MV)-Medium Voltage cable trench** |  |  |  |  |
|  | 1792 | **RHD4-02-002-RA05-(MV)-Medium Voltage cables 3Cx 500 mm²** |  |  |  |  |
|  | 5964 | **RHD4-02-002-Z7-RA05-Street Lighting Network - SL** |  | 2026-08-31 | 2026-10-11 |  |
|  | 5965 | **RHD4-02-002-RA05-(SL)-Street Lighting duct banks** |  | 2026-08-31 | 2026-09-08 |  |
| RHD4CZ7RA05SL2100 |  | Excavation of Duct Banks for Street Lighting Network - (ROUND-05)-Z7-RA05-SL | 2d | 2026-08-31 | 2026-09-01 | RHD4ENSDZ7APPSL170, RHD4CZ7RA05RA3000, RHD4CZ7C013IRR1104 |
| RHD4CZ7RA05SL2200 |  | Installation of Duct Banks for Street Lighting Network - (ROUND-05)-Z7-RA05-SL | 2d | 2026-09-02 | 2026-09-03 | RHD4PRSHLDOSSL1000, RHD4PRSHLSTAGSL1000, RHD4CZ7RA05SL2100 |
| RHD4CZ7RA05SL2300 |  | Pouring of Duct Banks for Street Lighting Network - (ROUND-05)-Z7-RA05-SL | 2d | 2026-09-05 | 2026-09-06 | RHD4CZ7RA05SL2200 |
| RHD4CZ7RA05SL2400 |  | Backfilling of Duct Banks for Street Lighting Network - (ROUND-05)-Z7-RA05-SL | 2d | 2026-09-07 | 2026-09-08 | RHD4CZ7RA05SL2300 |
|  | 5966 | **RHD4-02-002-RA05-(SL)-Street Lighting Drawpit** |  | 2026-09-13 | 2026-09-16 |  |
| RHD4CZ7RA05SL5100 |  | Excavation of Drawpit size 600x600x900mm for Street Lighting Network - (ROUND-05)-Z7-RA05-SL | 2d | 2026-09-13 | 2026-09-14 | RHD4ENSDZ7APPSL170, RHD4CZ7RA05SL2300, RHD4CZ7RA05RD3100 |
| RHD4CZ7RA05SL5200 |  | Installation of Drawpit size 600x600x900mm for Street Lighting Network - (ROUND-05)-Z7-RA05-SL | 2d | 2026-09-15 | 2026-09-16 | RHD4PRSHLDOSSL1400, RHD4PRSHLSTAGSL1400, RHD4CZ7RA05SL5100 |
|  | 5967 | **RHD4-02-002-RA05-(SL)-Street Lighting cables** |  | 2026-09-17 | 2026-09-27 |  |
| RHD4CZ7RA05SL3100 |  | Excavation for Street Lighting Cables for Street Lighting Network - (ROUND-05)-Z7-RA05-SL | 2d | 2026-09-17 | 2026-09-19 | RHD4ENSDZ7APPSL170, RHD4CZ7RA05SL5200 |
| RHD4CZ7RA05SL3200 |  | Cable Laying of Street Lighting Cables for Street Lighting Network - (ROUND-05)-Z7-RA05-SL | 2d | 2026-09-20 | 2026-09-21 | RHD4PRSHLDOSSL1100, RHD4ENMSSL2000, RHD4ENMSSL2010, RHD4PRSHLSTAGSL1100, RHD4CZ7RA05SL3100 |
| RHD4CZ7RA05SL3300 |  | Warning tape and Backfill for Street Lighting Cables for Street Lighting Network - (ROUND-05)-Z7-RA05-SL | 2d | 2026-09-22 | 2026-09-24 | RHD4CZ7RA05SL3200 |
| RHD4CZ7RA05SL3400 |  | Testing of Street Lighting Cables for Street Lighting Network - (ROUND-05)-Z7-RA05-SL | 2d | 2026-09-26 | 2026-09-27 | RHD4CZ7RA05SL3300 |
|  | 5968 | **RHD4-02-002-RA05-(SL)-Street Lighting Poles** |  | 2026-09-28 | 2026-10-11 |  |
| RHD4CZ7RA05SL1100 |  | Excavation for RC Base for Lighting Poles for Street Lighting Network - (ROUND-05)-Z7-RA05-SL | 2d | 2026-09-28 | 2026-09-29 | RHD4ENSDZ7APPSL170, RHD4CZ7RA05SL2400, RHD4CZ7RA05SL3400 |
| RHD4CZ7RA05SL1200 |  | Installation for RC Base for Lighting Poles for Street Lighting Network - (ROUND-05)-Z7-RA05-SL | 2d | 2026-09-30 | 2026-10-01 | RHD4CZ7RA05SL1100 |
| RHD4CZ7RA05SL1300 |  | Backfill for RC Base for Lighting Poles for Street Lighting Network - (ROUND-05)-Z7-RA05-SL | 2d | 2026-10-03 | 2026-10-04 | RHD4CZ7RA05SL1200 |
| RHD4CZ7RA05SL1400 |  | Installation for Lighting Poles for Street Lighting Network - (ROUND-05)-Z7-RA05-SL | 2d | 2026-10-05 | 2026-10-06 | RHD4PRSHLDOSSL1200, RHD4ENMSSL2000, RHD4ENMSSL2010, RHD4PRSHLSTAGSL1200, RHD4CZ7RA05SL1300, RHD4CZ7RA05SL3400 |
| RHD4CZ7RA05SL1500 |  | Luminaire Installation for Lighting Poles for Street Lighting Network - (ROUND-05)-Z7-RA05-SL | 2d | 2026-10-10 | 2026-10-11 | RHD4PRSHLDOSSL1300, RHD4PRSHLSTAGSL1300, RHD4CZ7RA05SL1400, RHD4CZ7RA05SL6100 |
|  | 5970 | **RHD4-02-002-RA05-(SL)-Street Lighting Earthing System** |  | 2026-10-07 | 2026-10-08 |  |
| RHD4CZ7RA05SL6100 |  | Installation of Earthing for Lighting Poles and Fedder Pillers for Street Lighting Network - (ROUND-05)-Z7-RA05-SL | 2d | 2026-10-07 | 2026-10-08 | RHD4ENMSER2000, RHD4ENMSER2010, RHD4CZ7RA05SL1400 |
|  | 489 | **RHD4-02-002-Z1-C081-Telecommunications Network - TC** |  | 2026-10-10 | 2026-10-26 |  |
|  | 490 | **RHD4-02-002-C081-(TC)-Telecommunications Ducts** |  | 2026-10-10 | 2026-10-26 |  |
| RHD4CZ7RA05TC2100 |  | Excavation of HDPE Ducts for Telecom Network - (RD-C-8 /1)-Z1-C081-TC | 5d | 2026-10-10 | 2026-10-14 | RHD4CZ7RA05SL6100 |
| RHD4CZ7RA05TC2200 |  | Installation of HDPE Ducts for Telecom Network - (RD-C-8 /1)-Z1-C081-TC | 5d | 2026-10-15 | 2026-10-20 | RHD4CZ7RA05TC2100 |
| RHD4CZ7RA05TC2400 |  | Backfilling of HDPE Ducts for Telecom Network - (RD-C-8 /1)-Z1-C081-TC | 5d | 2026-10-21 | 2026-10-26 | RHD4CZ7RA05TC2200 |
|  | 5980 | **RHD4-02-002-Z7-RA05-Information and Communication Technologies - ICT** |  | 2026-10-12 | 2026-11-01 |  |
|  | 5981 | **RHD4-02-002-RA05-(ICT)-Information and Communication Technologies Ducts** |  | 2026-10-12 | 2026-11-01 |  |
| RHD4CZ7RA05ICT2100 |  | Excavation of HDPE Ducts for ICT Network - (ROUND-05)-Z7-RA05-ICT | 5d | 2026-10-12 | 2026-10-17 | RHD4ENSDZ7APPICT200, RHD4CZ7RA05SL2100, RHD4CZ7RA05SL1500 |
| RHD4CZ7RA05ICT2200 |  | Installation of HDPE Ducts for ICT Network - (ROUND-05)-Z7-RA05-ICT | 7d | 2026-10-18 | 2026-10-25 | RHD4PRSHLDOSICT1000, RHD4PRSHLSTAGICT1000, RHD4CZ7RA05ICT2100 |
| RHD4CZ7RA05ICT2400 |  | Backfilling of HDPE Ducts for ICT Network - (ROUND-05)-Z7-RA05-ICT | 5d | 2026-10-27 | 2026-11-01 | RHD4CZ7RA05ICT2200, RHD4CZ7RA05TC2400 |
|  | 5971 | **RHD4-02-002-Z7-RA05-Landscape Network - LS** |  |  |  |  |
|  | 5972 | **RHD4-02-002-RA05-(LS)-Landscape Lighting cables** |  |  |  |  |
|  | 5973 | **RHD4-02-002-RA05-(LS)-Landscape Feeder Pillars** |  |  |  |  |
|  | 5974 | **RHD4-02-002-RA05-(LS)-Landscape Bollard Poles** |  |  |  |  |
|  | 5975 | **RHD4-02-002-RA05-(LS)-Landscape Feeder Pillars Earthing** |  |  |  |  |
|  | 5984 | **RHD4-02-002-Z7-RA05-Security Network - CCTV** |  |  |  |  |
|  | 5985 | **RHD4-02-002-RA05-(CCTV)-Civil Works** |  |  |  |  |
|  | 703 | **RHD4-02-002-Z2** |  | 2026-08-17 | 2027-09-11 |  |
|  | 893 | **RHD4-02-002-Z2-L102** |  | 2026-08-17 | 2027-09-06 |  |
|  | 924 | **RHD4-02-002-Z2-L102-Crossings Sewage Network - SWCr** |  |  |  |  |
|  | 934 | **RHD4-02-002-L102-(SWCr)-MH Works - 1200 mm diameter** |  |  |  |  |
|  | 935 | **RHD4-02-002-L102-(SWCr)-MH Works - 1200 mm diameter with Back drop** |  |  |  |  |
|  | 930 | **RHD4-02-002-L102-(SWCr)-UPVC Pipes - 200 mm diameter** |  |  |  |  |
|  | 968 | **RHD4-02-002-Z2-L102-Crossings Potable Network - PTCr** |  |  |  |  |
|  | 970 | **RHD4-02-002-L102-(PTCr)-HDPE Pipes - 160 mm diameter** |  |  |  |  |
|  | 969 | **RHD4-02-002-L102-(PTCr)-HDPE Pipes - 110 mm diameter** |  |  |  |  |
|  | 974 | **RHD4-02-002-L102-(PTCr)-Gate Valves (Direct Buried)** |  |  |  |  |
|  | 1015 | **RHD4-02-002-Z2-L102-Crossings Irrigation Network - IRRC** |  |  |  |  |

| ID | WBS | Task | Duration | Start | Finish | Predecessors |
| --- | --- | --- | --- | --- | --- | --- |
|  | 1016 | **RHD4-02-002-L102-(IRRC)-HDPE Pipes - 160 mm diameter** |  |  |  |  |
|  | 1024 | **RHD4-02-002-L102-(IRRC)-Gate Valves (Direct Buried)** |  |  |  |  |
|  | 1072 | **RHD4-02-002-Z2-L102-Road Works - RD** |  | 2026-09-03 | 2027-09-06 |  |
|  | 1073 | **RHD4-02-002-L102-(RD)-Subgrade** |  | 2026-09-03 | 2026-09-16 |  |
| RHD4CZ2L102RD1100 |  | Supply, lay and compaction subgrade compacted thickness 300 mm for Roads - (RD-L-10/2)-Z2-L102-RD | 12d | 2026-09-03 | 2026-09-16 | RHD4ENSDZ2APPEW100, RHD4ENSDZ2APPRD220, RHD4CZ2L102ST1506 |
|  | 1074 | **RHD4-02-002-L102-(RD)-Aggregate Base Course** |  | 2026-09-17 | 2026-09-28 |  |
| RHD4CZ2L102RD2100 |  | Supply, lay and compaction Aggregate base course compacted thickness 300 mmfor Roads - (RD-L-10/2)-Z2-L102-RD | 9d | 2026-09-17 | 2026-09-28 | RHD4PRSHLDOSRD1000, RHD4PRSHLSTAGRD1000, RHD4CZ2L102RD1100 |
|  | 1075 | **RHD4-02-002-L102-(RD)-Bituminous base course Two Layers, including (MC1)&(RC2)** |  | 2026-09-29 | 2027-07-31 |  |
| RHD4CZ2L102RD3100 |  | Supply, lay and Asphaltic base course including Prime Coat (MC1) for 1st Layer - (RD-L-10/2)-Z2-L102-RD | 2d | 2026-09-29 | 2026-09-30 | RHD4PRSHLDOSRD1100, RHD4ENMSASPH2000, RHD4ENMSASPH2010, RHD4PRSHLSTAGRD1100, RHD4CZ2L102RD2100, RHD4CZ7C032RD3100, RHD4CZ8L04RD3100 |
| RHD4CZ2L102RD3200 |  | Supply, lay and Asphaltic base course including Tack Coat (RC2) for 2nd Layer - (RD-L-10/2)-Z2-L102-RD | 2d | 2027-07-29 | 2027-07-31 | RHD4PRSHLDOSRD1100, RHD4PRSHLSTAGRD1100, RHD4CZ2L102RD3100, RHD4CZ2L102CCTV6100 |
|  | 1077 | **RHD4-02-002-L102-(RD)-Precast Concrete Curb** |  | 2027-08-01 | 2027-08-09 |  |
| RHD4CZ2L102RD5100 |  | Supply and installation Precast Concrete Kerb for Roads - (RD-L-10/2)-Z2-L102-RD | 8d | 2027-08-01 | 2027-08-09 | RHD4PRSHLDOSRD1200, RHD4ENMSRD2000, RHD4ENMSRD2010, RHD4PRSHLSTAGRD1200, RHD4CZ2L102RD3200 |
|  | 1080 | **RHD4-02-002-L102-(RD)-Traffic Signage** |  | 2027-08-10 | 2027-08-16 |  |
| RHD4CZ2L102RD8100 |  | Installation of Traffic Signage for Road Network - (RD-L-10/2)-Z2-L102-RD | 6d | 2027-08-10 | 2027-08-16 | RHD4PRSHLDOSRD1600, RHD4PRSHLSTAGRD1600, RHD4CZ2L102RD5100, RHD4CZ2L102TC2400, RHD4CZ2L102ICT2400 |
|  | 1078 | **RHD4-02-002-L102-(RD)-Precast Interlocking Block Pavers** |  | 2027-08-17 | 2027-08-29 |  |
| RHD4CZ2L102RD6100 |  | Interlocking block pavers for sidewalk-footpath for Side walks and Parking areas - (RD-L-10/2)-Z2-L102-RD | 11d | 2027-08-17 | 2027-08-29 | RHD4PRSHLDOSRD1300, RHD4PRSHLDOSRD1400, RHD4ENMSRD2000, RHD4ENMSRD2010, RHD4PRSHLSTAGRD1300, RHD4PRSHLSTAGRD1400, RHD4CZ2L102RD8100 |
|  | 1076 | **RHD4-02-002-L102-(RD)-Bituminous concrete wearing course including tack coat (RC2)** |  | 2027-08-30 | 2027-08-31 |  |
| RHD4CZ2L102RD4100 |  | Supply, lay and compaction Asphaltic wearing course including tack Coat (RC2)for Road Network - (RD-L-10/2)-Z2-L102-RD | 2d | 2027-08-30 | 2027-08-31 | RHD4CZ2L102RD5100, RHD4CZ2L102RD6100 |
|  | 1079 | **RHD4-02-002-L102-(RD)-Pavement Marking** |  | 2027-09-01 | 2027-09-06 |  |
| RHD4CZ2L102RD7100 |  | Pavement Markings for Road Network - (RD-L-10/2)-Z2-L102-RD | 5d | 2027-09-01 | 2027-09-06 | RHD4PRSHLDOSRD1500, RHD4PRSHLSTAGRD1500, RHD4CZ2L102RD4100 |
|  | 897 | **RHD4-02-002-Z2-L102-Storm Network - ST** |  | 2026-08-17 | 2026-10-28 |  |
|  | 916 | **RHD4-02-002-L102-(ST)-MH Works - 2000 mm diameter** |  | 2026-08-17 | 2026-08-30 |  |
| RHD4CZ2L102ST3102 |  | Excavation and PC Blinding works for MH 2000 mm - (RD-L-10/2)-Z2-L102-ST | 2d | 2026-08-17 | 2026-08-18 | RHD4ENSDZ2APPST110, RHD4ENMSST2000, RHD4PRSHLDOSST1001 |
| RHD4CZ2L102ST3202 |  | Installation of Base for MH 2000 mm - (RD-L-10/2)-Z2-L102-ST | 3d | 2026-08-19 | 2026-08-22 | RHD4PRSHLSTAGST1601, RHD4CZ2L102ST3102 |
| RHD4CZ2L102ST3302 |  | MH Ring and C.Slab works and Backfilling works for MH 2000 mm - (RD-L-10/2)-Z2-L102-ST | 3d | 2026-08-23 | 2026-08-25 | RHD4PRSHLDOSST1601, RHD4CZ2L102ST3202 |
| RHD4CZ2L102ST3402 |  | Steel Cover for MH 2000 mm - (RD-L-10/2)-Z2-L102-ST | 2d | 2026-08-26 | 2026-08-27 | RHD4PRSHLDOSST1701, RHD4PRSHLSTAGST1701, RHD4CZ2L102ST3302 |
| RHD4CZ2L102ST3502 |  | Finishing, Benching, Testing works for MH 2000 mm - (RD-L-10/2)-Z2-L102-ST | 2d | 2026-08-29 | 2026-08-30 | RHD4CZ2L102ST3402 |
|  | 915 | **RHD4-02-002-L102-(ST)-MH Works - 1500 mm diameter** |  | 2026-08-19 | 2026-10-26 |  |
| RHD4CZ2L102ST3101 |  | Excavation and PC Blinding works for MH 1500 mm - (RD-L-10/2)-Z2-L102-ST | 4d | 2026-08-19 | 2026-08-23 | RHD4ENSDZ2APPST110, RHD4ENMSST2000, RHD4CZ2L102ST3102 |
| RHD4CZ2L102ST3201 |  | Installation of Base for MH 1500 mm - (RD-L-10/2)-Z2-L102-ST | 4d | 2026-08-24 | 2026-08-27 | RHD4PRSHLSTAGST1601, RHD4CZ2L102ST3101, RHD4CZ2L102ST3202 |
| RHD4CZ2L102ST3301 |  | MH Ring and C.Slab works and Backfilling works for MH 1500 mm - (RD-L-10/2)-Z2-L102-ST | 4d | 2026-08-29 | 2026-09-01 | RHD4PRSHLDOSST1601, RHD4CZ2L102ST3201, RHD4CZ2L102ST3302 |
| RHD4CZ2L102ST3401 |  | Steel Cover for MH 1500 mm - (RD-L-10/2)-Z2-L102-ST | 3d | 2026-10-05 | 2026-10-07 | RHD4PRSHLDOSST1701, RHD4PRSHLSTAGST1701, RHD4CZ2L102ST3301, RHD4CZ2L102ST1500, RHD4CZ2L102ST3402 |
| RHD4CZ2L102ST3501 |  | Finishing, Benching, Testing works for MH 1500 mm - (RD-L-10/2)-Z2-L102-ST | 4d | 2026-10-22 | 2026-10-26 | RHD4CZ2L102ST3401, RHD4CZ2L102ST2500, RHD4CZ2L102ST3502 |
|  | 914 | **RHD4-02-002-L102-(ST)-MH Works - 1200 mm diameter** |  | 2026-08-24 | 2026-10-28 |  |
| RHD4CZ2L102ST3100 |  | Excavation and PC Blinding works for MH 1200 mm - (RD-L-10/2)-Z2-L102-ST | 2d | 2026-08-24 | 2026-08-25 | RHD4ENSDZ2APPST110, RHD4ENMSST2000, RHD4ENMSST2010, RHD4CZ2L102ST3101 |
| RHD4CZ2L102ST3200 |  | Installation of Base for MH 1200 mm - (RD-L-10/2)-Z2-L102-ST | 2d | 2026-08-29 | 2026-08-30 | RHD4PRSHLSTAGST1601, RHD4CZ2L102ST3100, RHD4CZ2L102ST3201 |
| RHD4CZ2L102ST3300 |  | MH Ring and C.Slab works and Backfilling works for MH 1200 mm - (RD-L-10/2)-Z2-L102-ST | 2d | 2026-09-02 | 2026-09-03 | RHD4PRSHLDOSST1601, RHD4CZ2L102ST3200, RHD4CZ2L102ST3301 |
| RHD4CZ2L102ST3400 |  | Steel Cover for MH 1200 mm - (RD-L-10/2)-Z2-L102-ST | 2d | 2026-10-22 | 2026-10-24 | RHD4PRSHLDOSST1701, RHD4PRSHLSTAGST1701, RHD4CZ2L102ST3300, RHD4CZ2L102ST2500, RHD4CZ2L102ST1500, RHD4CZ2L102ST3401 |
| RHD4CZ2L102ST3500 |  | Finishing, Benching, Testing works for MH 1200 mm - (RD-L-10/2)-Z2-L102-ST | 2d | 2026-10-27 | 2026-10-28 | RHD4CZ2L102ST3400, RHD4CZ2L102ST3501 |
|  | 906 | **RHD4-02-002-L102-(ST)-GRP Pipes - 1200 mm diameter** |  |  |  |  |
|  | 905 | **RHD4-02-002-L102-(ST)-GRP Pipes - 1100 mm diameter** |  |  |  |  |
|  | 904 | **RHD4-02-002-L102-(ST)-GRP Pipes - 1000 mm diameter** |  | 2026-08-23 | 2026-09-02 |  |
| RHD4CZ2L102ST1106 |  | Excavation works for GRP Pipe Line 1000 mm - (RD-L-10/2)-Z2-L102-ST | 2d | 2026-08-23 | 2026-08-24 | RHD4ENSDZ2APPST110, RHD4PRSHLDOSST1301 |
| RHD4CZ2L102ST1206 |  | Bedding works for GRP Pipe Line 1000 mm - (RD-L-10/2)-Z2-L102-ST | 2d | 2026-08-25 | 2026-08-26 | RHD4CZ2L102ST1106 |
| RHD4CZ2L102ST1306 |  | Installing for GRP Pipe Line 1000 mm - (RD-L-10/2)-Z2-L102-ST | 2d | 2026-08-27 | 2026-08-29 | RHD4PRSHLSTAGST1001 FF, RHD4CZ2L102ST1206, RHD4PRSHLPOST1000, RHD4PRSHLDOSST1001 |
| RHD4CZ2L102ST1406 |  | Primary Test for GRP Pipe Line 1000 mm - (RD-L-10/2)-Z2-L102-ST | 2d | 2026-08-30 | 2026-08-31 | RHD4CZ2L102ST1306 |
| RHD4CZ2L102ST1506 |  | Backfilling and warning tape works for GRP Pipe Line 1000 mm - (RD-L-10/2)-Z2-L102-ST | 2d | 2026-09-01 | 2026-09-02 | RHD4CZ2L102ST1406 |
|  | 903 | **RHD4-02-002-L102-(ST)-GRP Pipes - 900 mm diameter** |  | 2026-09-03 | 2026-09-14 |  |
| RHD4CZ2L102ST1105 |  | Excavation works for GRP Pipe Line 900 mm - (RD-L-10/2)-Z2-L102-ST | 2d | 2026-09-03 | 2026-09-05 | RHD4ENSDZ2APPST110, RHD4CZ2L102ST1106, RHD4CZ2L102ST1506 |
| RHD4CZ2L102ST1205 |  | Bedding works for GRP Pipe Line 900 mm - (RD-L-10/2)-Z2-L102-ST | 2d | 2026-09-06 | 2026-09-07 | RHD4CZ2L102ST1105 |
| RHD4CZ2L102ST1305 |  | Installing for GRP Pipe Line 900 mm - (RD-L-10/2)-Z2-L102-ST | 2d | 2026-09-08 | 2026-09-09 | RHD4PRSHLSTAGST1001, RHD4CZ2L102ST1205, RHD4CZ2L102ST1306, RHD4PRSHLPOST1000, RHD4PRSHLDOSST1001 |
| RHD4CZ2L102ST1405 |  | Primary Test for GRP Pipe Line 900 mm - (RD-L-10/2)-Z2-L102-ST | 2d | 2026-09-10 | 2026-09-12 | RHD4CZ2L102ST1305, RHD4CZ2L102ST1406 |
| RHD4CZ2L102ST1505 |  | Backfilling and warning tape works for GRP Pipe Line 900 mm - (RD-L-10/2)-Z2-L102-ST | 2d | 2026-09-13 | 2026-09-14 | RHD4CZ2L102ST1405, RHD4CZ2L102ST1506 |
|  | 902 | **RHD4-02-002-L102-(ST)-GRP Pipes - 800 mm diameter** |  | 2026-09-15 | 2026-09-27 |  |
| RHD4CZ2L102ST1104 |  | Excavation works for GRP Pipe Line 800 mm - (RD-L-10/2)-Z2-L102-ST | 2d | 2026-09-15 | 2026-09-16 | RHD4ENSDZ2APPST110, RHD4CZ2L102ST1105, RHD4CZ2L102ST1505 |
| RHD4CZ2L102ST1204 |  | Bedding works for GRP Pipe Line 800 mm - (RD-L-10/2)-Z2-L102-ST | 2d | 2026-09-17 | 2026-09-19 | RHD4CZ2L102ST1104 |
| RHD4CZ2L102ST1304 |  | Installing for GRP Pipe Line 800 mm - (RD-L-10/2)-Z2-L102-ST | 2d | 2026-09-20 | 2026-09-21 | RHD4PRSHLSTAGST1001, RHD4CZ2L102ST1204, RHD4CZ2L102ST1305, RHD4PRSHLPOST1000, RHD4PRSHLDOSST1001 |
| RHD4CZ2L102ST1404 |  | Primary Test for GRP Pipe Line 800 mm - (RD-L-10/2)-Z2-L102-ST | 2d | 2026-09-22 | 2026-09-24 | RHD4CZ2L102ST1304, RHD4CZ2L102ST1405 |
| RHD4CZ2L102ST1504 |  | Backfilling and warning tape works for GRP Pipe Line 800 mm - (RD-L-10/2)-Z2-L102-ST | 2d | 2026-09-26 | 2026-09-27 | RHD4CZ2L102ST1404, RHD4CZ2L102ST1505 |
|  | 901 | **RHD4-02-002-L102-(ST)-GRP Pipes - 700 mm diameter** |  | 2026-09-17 | 2026-09-29 |  |
| RHD4CZ2L102ST1103 |  | Excavation works for GRP Pipe Line 700 mm - (RD-L-10/2)-Z2-L102-ST | 2d | 2026-09-17 | 2026-09-19 | RHD4ENSDZ2APPST110, RHD4CZ2L102ST1104 |
| RHD4CZ2L102ST1203 |  | Bedding works for GRP Pipe Line 700 mm - (RD-L-10/2)-Z2-L102-ST | 2d | 2026-09-20 | 2026-09-21 | RHD4CZ2L102ST1103 |
| RHD4CZ2L102ST1303 |  | Installing for GRP Pipe Line 700 mm - (RD-L-10/2)-Z2-L102-ST | 2d | 2026-09-22 | 2026-09-24 | RHD4PRSHLSTAGST1001, RHD4CZ2L102ST1203, RHD4CZ2L102ST1304, RHD4PRSHLPOST1000, RHD4PRSHLDOSST1001 |
| RHD4CZ2L102ST1403 |  | Primary Test for GRP Pipe Line 700 mm - (RD-L-10/2)-Z2-L102-ST | 2d | 2026-09-26 | 2026-09-27 | RHD4CZ2L102ST1303, RHD4CZ2L102ST1404 |
| RHD4CZ2L102ST1503 |  | Backfilling and warning tape works for GRP Pipe Line 700 mm - (RD-L-10/2)-Z2-L102-ST | 2d | 2026-09-28 | 2026-09-29 | RHD4CZ2L102ST1403, RHD4CZ2L102ST1504 |
|  | 900 | **RHD4-02-002-L102-(ST)-GRP Pipes - 600 mm diameter** |  | 2026-09-20 | 2026-10-01 |  |
| RHD4CZ2L102ST1102 |  | Excavation works for GRP Pipe Line 600 mm - (RD-L-10/2)-Z2-L102-ST | 2d | 2026-09-20 | 2026-09-21 | RHD4ENSDZ2APPST110, RHD4CZ2L102ST1103 |
| RHD4CZ2L102ST1202 |  | Bedding works for GRP Pipe Line 600 mm - (RD-L-10/2)-Z2-L102-ST | 2d | 2026-09-22 | 2026-09-24 | RHD4CZ2L102ST1102 |
| RHD4CZ2L102ST1302 |  | Installing for GRP Pipe Line 600 mm - (RD-L-10/2)-Z2-L102-ST | 2d | 2026-09-26 | 2026-09-27 | RHD4PRSHLSTAGST1001, RHD4CZ2L102ST1202, RHD4CZ2L102ST1303, RHD4PRSHLPOST1000, RHD4PRSHLDOSST1001 |
| RHD4CZ2L102ST1402 |  | Primary Test for GRP Pipe Line 600 mm - (RD-L-10/2)-Z2-L102-ST | 2d | 2026-09-28 | 2026-09-29 | RHD4CZ2L102ST1302, RHD4CZ2L102ST1403 |

| ID | WBS | Task | Duration | Start | Finish | Predecessors |
| --- | --- | --- | --- | --- | --- | --- |
| RHD4CZ2L102ST1502 |  | Backfilling and warning tape works for GRP Pipe Line 600 mm - (RD-L-10/2)-Z2-L102-ST | 2d | 2026-09-30 | 2026-10-01 | RHD4CZ2L102ST1402, RHD4CZ2L102ST1503 |
|  | 899 | **RHD4-02-002-L102-(ST)-GRP Pipes - 500 mm diameter** |  |  |  |  |
|  | 898 | **RHD4-02-002-L102-(ST)-GRP Pipes - 400 mm diameter** |  | 2026-09-22 | 2026-10-04 |  |
| RHD4CZ2L102ST1100 |  | Excavation works for GRP Pipe Line 400 mm - (RD-L-10/2)-Z2-L102-ST | 2d | 2026-09-22 | 2026-09-24 | RHD4ENSDZ2APPST110, RHD4CZ2L102ST1102 |
| RHD4CZ2L102ST1200 |  | Bedding works for GRP Pipe Line 400 mm - (RD-L-10/2)-Z2-L102-ST | 2d | 2026-09-26 | 2026-09-27 | RHD4CZ2L102ST1100 |
| RHD4CZ2L102ST1300 |  | Installing for GRP Pipe Line 400 mm - (RD-L-10/2)-Z2-L102-ST | 2d | 2026-09-28 | 2026-09-29 | RHD4PRSHLSTAGST1001 FF, RHD4CZ2L102ST1200, RHD4PRSHLPOST1000, RHD4PRSHLDOSST1001 |
| RHD4CZ2L102ST1400 |  | Primary Test for GRP Pipe Line 400 mm - (RD-L-10/2)-Z2-L102-ST | 2d | 2026-09-30 | 2026-10-01 | RHD4CZ2L102ST1300 |
| RHD4CZ2L102ST1500 |  | Backfilling and warning tape works for GRP Pipe Line 400 mm - (RD-L-10/2)-Z2-L102-ST | 2d | 2026-10-03 | 2026-10-04 | RHD4CZ2L102ST1400 |
|  | 913 | **RHD4-02-002-L102-(ST)-UPVC Pipes - 400 mm diameter** |  |  |  |  |
|  | 912 | **RHD4-02-002-L102-(ST)-UPVC Pipes - 300 mm diameter** |  | 2026-10-05 | 2026-10-21 |  |
| RHD4CZ2L102ST2100 |  | Excavation works for UPVC Pipe Line 300 mm - (RD-L-10/2)-Z2-L102-ST | 3d | 2026-10-05 | 2026-10-07 | RHD4ENSDZ2APPST110, RHD4CZ2L102ST3300, RHD4CZ2L102ST3301, RHD4CZ2L102ST1500 |
| RHD4CZ2L102ST2200 |  | Bedding works for UPVC Pipe Line 300 mm - (RD-L-10/2)-Z2-L102-ST | 3d | 2026-10-08 | 2026-10-11 | RHD4CZ2L102ST2100, RHD4CZ4L01MV3300 |
| RHD4CZ2L102ST2300 |  | Installing for UPVC Pipe Line 300 mm - (RD-L-10/2)-Z2-L102-ST | 3d | 2026-10-12 | 2026-10-14 | RHD4PRSHLDOSST1101, RHD4PRSHLSTAGST1101, RHD4CZ2L102ST2200 |
| RHD4CZ2L102ST2400 |  | Primary Test for UPVC Pipe Line 300 mm - (RD-L-10/2)-Z2-L102-ST | 2d | 2026-10-15 | 2026-10-17 | RHD4CZ2L102ST2300, RHD4CTUN1Z5STG21320, RHD4CZ6C052PT3200, RHD4CZ7C032SL2400 |
| RHD4CZ2L102ST2500 |  | Backfilling and warning tape works for UPVC Pipe Line 300 mm - (RD-L-10/2)-Z2-L102-ST | 4d | 2026-10-18 | 2026-10-21 | RHD4CZ2L102ST2400, RHD4CZ2L102ST6100 |
|  | 920 | **RHD4-02-002-L102-(ST)-Concrete Encasement** |  | 2026-10-13 | 2026-10-14 |  |
| RHD4CZ2L102ST6100 |  | Pipe Encasement for Storm Pipelines - (RD-L-10/2)-Z2-L102-ST | 2d | 2026-10-13 | 2026-10-14 | RHD4CZ2L102ST2300 SS, RHD4CZ2L102ST2300 FF, RHD4CZ2L102ST2200 |
|  | 921 | **RHD4-02-002-Z2-L102-Catch Basin - ST** |  | 2026-08-19 | 2026-09-15 |  |
|  | 922 | **RHD4-02-002-L102-(ST)-Single Catch Basin Works** |  | 2026-08-19 | 2026-09-12 |  |
| RHD4CZ2L102ST7100 |  | Excavation works for Single Catch Basin - (RD-L-10/2)-Z2-L102-ST | 3d | 2026-08-19 | 2026-08-22 | RHD4ENSDZ2APPST110, RHD4CZ2L102ST3102 |
| RHD4CZ2L102ST7200 |  | PC Blinding, Installation and Pipe connection for Single Catch Basin - (RD-L-10/2)-Z2-L102-ST | 3d | 2026-08-23 | 2026-08-25 | RHD4CZ2L102ST7100 |
| RHD4CZ2L102ST7300 |  | Rings & C.Slab & Final Backfill for Single Catch Basin - (RD-L-10/2)-Z2-L102-ST | 4d | 2026-08-29 | 2026-09-01 | RHD4PRSHLDOSST1301, RHD4PRSHLSTAGST1301, RHD4CZ2L102ST7200 |
| RHD4CZ2L102ST7400 |  | Steel Cover for Single Catch Basin - (RD-L-10/2)-Z2-L102-ST | 3d | 2026-09-02 | 2026-09-05 | RHD4PRSHLDOSST1701, RHD4CZ2L102ST7300 |
| RHD4CZ2L102ST7500 |  | Finishing and Insulation works for Single Catch Basin - (RD-L-10/2)-Z2-L102-ST | 6d | 2026-09-06 | 2026-09-12 | RHD4CZ2L102ST7400 |
|  | 923 | **RHD4-02-002-L102-(ST)-Double Catch Basin Works** |  | 2026-09-05 | 2026-09-15 |  |
| RHD4CZ2L102ST8100 |  | Excavation works for Double Catch Basin - (RD-L-10/2)-Z2-L102-ST | 2d | 2026-09-05 | 2026-09-06 | RHD4ENSDZ2APPST110, RHD4CZ2L102ST3300, RHD4CZ2L102ST3301, RHD4CZ2L102ST7100 |
| RHD4CZ2L102ST8200 |  | PC Blinding, Installation and Pipe connection for Double Catch Basin - (RD-L-10/2)-Z2-L102-ST | 2d | 2026-09-07 | 2026-09-08 | RHD4CZ2L102ST8100, RHD4CZ2L102ST7200 |
| RHD4CZ2L102ST8300 |  | Rings & C.Slab & Final Backfillfor Double Catch Basin - (RD-L-10/2)-Z2-L102-ST | 2d | 2026-09-09 | 2026-09-10 | RHD4PRSHLDOSST1301, RHD4PRSHLSTAGST1301, RHD4CZ2L102ST8200, RHD4CZ2L102ST7300 |
| RHD4CZ2L102ST8400 |  | Steel Cover for Double Catch Basin - (RD-L-10/2)-Z2-L102-ST | 2d | 2026-09-12 | 2026-09-13 | RHD4PRSHLDOSST1701, RHD4CZ2L102ST8300, RHD4CZ2L102ST7400 |
| RHD4CZ2L102ST8500 |  | Finishing and Insulation works for Double Catch Basin - (RD-L-10/2)-Z2-L102-ST | 2d | 2026-09-14 | 2026-09-15 | RHD4CZ2L102ST8400, RHD4CZ2L102ST7500 |
|  | 894 | **RHD4-02-002-Z2-L102-Concrete Box Culvert - ST** |  | 2027-01-07 | 2027-02-10 |  |
|  | 895 | **RHD4-02-002-L102-(ST)-Concrete Box Culvert** |  | 2027-01-07 | 2027-02-10 |  |
| RHD4CZ2L102ST4100 |  | Excavation works for Box Culvert - (RD-L-10/2)-Z2-L102-ST | 4d | 2027-01-07 | 2027-01-11 | RHD4ENSDZ2APPST110, RHD4ENMSBC2000, RHD4ENMSBC2010, RHD4CZ2L102PT1501 |
| RHD4CZ2L102ST4200 |  | PC works for Box Culvert - (RD-L-10/2)-Z2-L102-ST | 2d | 2027-01-12 | 2027-01-13 | RHD4CZ2L102ST4100 |
| RHD4CZ2L102ST4400 |  | Raft works for Box Culvert - (RD-L-10/2)-Z2-L102-ST | 7d | 2027-01-14 | 2027-01-21 | RHD4PRSHLDOSST1501, RHD4PRSHLSTAGST1501 SS, RHD4CZ2L102ST4200 |
| RHD4CZ2L102ST4500 |  | Wall and slab works for Box Culvert - (RD-L-10/2)-Z2-L102-ST | 7d | 2027-01-23 | 2027-01-30 | RHD4PRSHLDOSST1501, RHD4PRSHLSTAGST1501, RHD4CZ2L102ST4400 |
| RHD4CZ2L102ST4700 |  | Backfilling works for Box Culvert - (RD-L-10/2)-Z2-L102-ST | 4d | 2027-01-31 | 2027-02-03 | RHD4CZ2L102ST4500, RHD4CZ2L102ST5300 |
| RHD4CZ2L102ST4600 |  | Insulation and Testing for Box Culvert - (RD-L-10/2)-Z2-L102-ST | 6d | 2027-02-04 | 2027-02-10 | RHD4CZ2L102ST4700, RHD4CZ2L102ST5400, RHD4CZ2L102ST5400 FF |
|  | 896 | **RHD4-02-002-L102-(ST)-Concrete Chambers** |  | 2027-01-12 | 2027-01-20 |  |
| RHD4CZ2L102ST5100 |  | Excavation and Bedding for Concrete Chambers - for Box Culvert - (RD-L-10/2)-Z2-L102-ST | 2d | 2027-01-12 | 2027-01-13 | RHD4ENSDZ2APPST110, RHD4CZ2L102ST4100 |
| RHD4CZ2L102ST5200 |  | PC works for Concrete Chambers - for Box Culvert - (RD-L-10/2)-Z2-L102-ST | 2d | 2027-01-14 | 2027-01-16 | RHD4CZ2L102ST5100 |
| RHD4CZ2L102ST5300 |  | Installation for Concrete Chambers - for Box Culvert - (RD-L-10/2)-Z2-L102-ST | 2d | 2027-01-17 | 2027-01-18 | RHD4CZ2L102ST5200 |
| RHD4CZ2L102ST5400 |  | Backfilling works for Concrete Chambers - for Box Culvert - (RD-L-10/2)-Z2-L102-ST | 2d | 2027-01-19 | 2027-01-20 | RHD4CZ2L102ST5300 |
|  | 946 | **RHD4-02-002-Z2-L102-Sewage Network - SW** |  | 2026-10-22 | 2026-12-05 |  |
|  | 956 | **RHD4-02-002-L102-(SW)-MH Works - 1200 mm diameter** |  | 2026-10-22 | 2026-12-02 |  |
| RHD4CZ2L102SW3100 |  | Excavation and PC Blinding works for MH 1200 mm - (RD-L-10/2)-Z2-L102-SW | 7d | 2026-10-22 | 2026-10-29 | RHD4ENSDZ2APPSW120, RHD4CZ2L102ST2500 |
| RHD4CZ2L102SW3200 |  | Installation of Base for MH 1200 mm - (RD-L-10/2)-Z2-L102-SW | 8d | 2026-10-31 | 2026-11-08 | RHD4CZ2L102SW3100, RHD4CZ2L102ST3500 |
| RHD4CZ2L102SW3300 |  | MH Ring and C.Slab works and Backfilling works for MH 1200 mm - (RD-L-10/2)-Z2-L102-SW | 8d | 2026-11-09 | 2026-11-17 | RHD4PRSHLDOSSW1301, RHD4PRSHLSTAGSW1301, RHD4CZ2L102SW3200, RHD4CZ5L07IRR3200, RHD4CZ9C071ST1500 |
| RHD4CZ2L102SW3400 |  | Steel Cover for MH 1200 mm - (RD-L-10/2)-Z2-L102-SW | 5d | 2026-11-18 | 2026-11-23 | RHD4PRSHLDOSSW1401, RHD4PRSHLSTAGSW1401, RHD4CZ2L102SW3300 |
| RHD4CZ2L102SW3500 |  | Finishing, Benching, Testing works for MH 1200 mm - (RD-L-10/2)-Z2-L102-SW | 8d | 2026-11-24 | 2026-12-02 | RHD4CZ2L102SW3400 |
|  | 957 | **RHD4-02-002-L102-(SW)-MH Works - 1200 mm diameter with Back drop** |  |  |  |  |
|  | 952 | **RHD4-02-002-L102-(SW)-UPVC Pipes - 200 mm diameter** |  | 2026-10-31 | 2026-12-05 |  |
| RHD4CZ2L102SW2100 |  | Excavation works for UPVC Pipe Line 200 mm - (RD-L-10/2)-Z2-L102-SW | 5d | 2026-10-31 | 2026-11-04 | RHD4ENSDZ2APPSW120, RHD4CZ2L102SW3100 |
| RHD4CZ2L102SW2200 |  | Bedding works for UPVC Pipe Line 200 mm - (RD-L-10/2)-Z2-L102-SW | 5d | 2026-11-05 | 2026-11-10 | RHD4CZ2L102SW2100 |
| RHD4CZ2L102SW2300 |  | Installing for UPVC Pipe Line 200 mm - (RD-L-10/2)-Z2-L102-SW | 6d | 2026-11-18 | 2026-11-24 | RHD4PRSHLDOSSW1001, RHD4PRSHLSTAGSW1001, RHD4CZ2L102SW2200, RHD4CZ2L102SW3300 |
| RHD4CZ2L102SW2400 |  | Primary Test for UPVC Pipe Line 200 mm - (RD-L-10/2)-Z2-L102-SW | 3d | 2026-11-25 | 2026-11-28 | RHD4CZ2L102SW2300 |
| RHD4CZ2L102SW2500 |  | Backfilling and warning tape works for UPVC Pipe Line 200 mm - (RD-L-10/2)-Z2-L102-SW | 6d | 2026-11-29 | 2026-12-05 | RHD4CZ2L102SW2400 |
|  | 955 | **RHD4-02-002-L102-(SW)-Concrete Encasement** |  |  |  |  |
|  | 983 | **RHD4-02-002-Z2-L102-Potable Network - PT** |  | 2026-12-06 | 2027-02-07 |  |
|  | 985 | **RHD4-02-002-L102-(PT)-HDPE Pipes - 160 mm diameter** |  | 2026-12-06 | 2027-01-06 |  |
| RHD4CZ2L102PT1101 |  | Excavation works for HDPE Pipline 160 mm - (RD-L-10/2)-Z2-L102-PT | 5d | 2026-12-06 | 2026-12-10 | RHD4ENSDZ2APPPT130, RHD4ENMSPT2000, RHD4CZ2L102SW2500, RHD4CZ7RA05ICT2400, RHD4CZ8A011ST7300 |
| RHD4CZ2L102PT1201 |  | Bedding works for HDPE Pipline 160 mm - (RD-L-10/2)-Z2-L102-PT | 4d | 2026-12-12 | 2026-12-15 | RHD4CZ2L102PT1101 |
| RHD4CZ2L102PT1301 |  | Installing for HDPE Pipline 160 mm - (RD-L-10/2)-Z2-L102-PT | 7d | 2026-12-16 | 2026-12-23 | RHD4PRSHLDOSPT1000, RHD4PRSHLSTAGPT1000, RHD4CZ2L102PT1201 |
| RHD4CZ2L102PT1401 |  | Primary Test for HDPE Pipline 160 mm - (RD-L-10/2)-Z2-L102-PT | 3d | 2026-12-28 | 2026-12-30 | RHD4CZ2L102PT1301, RHD4CZ2L102PT3100, RHD4CZ2C082PT2401, RHD4CZ5L016IRR1504 |
| RHD4CZ2L102PT1501 |  | Backfilling and warning tape works for HDPE Pipline 160 mm - (RD-L-10/2)-Z2-L102-PT | 6d | 2026-12-31 | 2027-01-06 | RHD4CZ2L102PT1401 |
|  | 984 | **RHD4-02-002-L102-(PT)-HDPE Pipes - 110 mm diameter** |  | 2026-12-12 | 2027-01-09 |  |
| RHD4CZ2L102PT1100 |  | Excavation works for HDPE Pipline 110 mm - (RD-L-10/2)-Z2-L102-PT | 2d | 2026-12-12 | 2026-12-13 | RHD4ENSDZ2APPPT130, RHD4ENMSPT2000, RHD4CZ2L102PT1101 |
| RHD4CZ2L102PT1200 |  | Bedding works for HDPE Pipline 110 mm - (RD-L-10/2)-Z2-L102-PT | 2d | 2026-12-16 | 2026-12-17 | RHD4CZ2L102PT1100, RHD4CZ2L102PT1201 |
| RHD4CZ2L102PT1300 |  | Installing for HDPE Pipline 110 mm - (RD-L-10/2)-Z2-L102-PT | 2d | 2026-12-24 | 2026-12-26 | RHD4PRSHLDOSPT1000, RHD4PRSHLSTAGPT1000, RHD4CZ2L102PT1200, RHD4CZ2L102PT1301 |
| RHD4CZ2L102PT1400 |  | Primary Test for HDPE Pipline 110 mm - (RD-L-10/2)-Z2-L102-PT | 2d | 2026-12-31 | 2027-01-02 | RHD4CZ2L102PT1300, RHD4CZ2L102PT1401 |

| ID | WBS | Task | Duration | Start | Finish | Predecessors |
| --- | --- | --- | --- | --- | --- | --- |
| RHD4CZ2L102PT1500 |  | Backfilling and warning tape works for HDPE Pipline 110 mm - (RD-L-10/2)-Z2-L102-PT | 2d | 2027-01-07 | 2027-01-09 | RHD4CZ2L102PT1400, RHD4CZ2L102PT1501 |
|  | 989 | **RHD4-02-002-L102-(PT)-Gate Valves (Direct Buried)** |  | 2026-12-24 | 2027-01-12 |  |
| RHD4CZ2L102PT3100 |  | Installation for Direct Buried Gate Valves - (RD-L-10/2)-Z2-L102-PT | 3d | 2026-12-24 | 2026-12-27 | RHD4PRSHLDOSPT1200, RHD4PRSHLSTAGPT1200, RHD4CZ2L102PT1301 FF, RHD4CZ2L102PT1300 FF, RHD4CZ2L102PT1301 SS, RHD4CZ2L102PT1300 SS |
| RHD4CZ2L102PT3200 |  | Stem and Service box for Direct Buried Gate Valves - (RD-L-10/2)-Z2-L102-PT | 3d | 2027-01-10 | 2027-01-12 | RHD4PRSHLDOSPT1300, RHD4PRSHLSTAGPT1300, RHD4CZ2L102PT3100, RHD4CZ2L102PT1501, RHD4CZ2L102PT1500 |
|  | 992 | **RHD4-02-002-L102-(PT)-Wash out Valve Chambers** |  | 2027-01-07 | 2027-01-16 |  |
| RHD4CZ2L102PT2101 |  | Excavation and Bedding for Wash out Valve Chambers for Potable Water Network - (RD-L-10/2)-Z2-L102-PT | 2d | 2027-01-07 | 2027-01-09 | RHD4ENSDZ2APPPT130, RHD4CZ2L102PT1501 |
| RHD4CZ2L102PT2201 |  | PC works for Wash out Valve Chambers for Potable Water Network - (RD-L-10/2)-Z2-L102-PT | 2d | 2027-01-10 | 2027-01-11 | RHD4CZ2L102PT2101 |
| RHD4CZ2L102PT2301 |  | Installation for Wash out Valve Chambers for Potable Water Network - (RD-L-10/2)-Z2-L102-PT | 2d | 2027-01-12 | 2027-01-13 | RHD4PRSHLDOSPT1100, RHD4PRSHLDOSPT1400, RHD4PRSHLSTAGPT1100, RHD4PRSHLSTAGPT1400, RHD4CZ2L102PT2201 |
| RHD4CZ2L102PT2401 |  | Backfilling works for Wash out Valve Chambers for Potable Water Network - (RD-L-10/2)-Z2-L102-PT | 2d | 2027-01-14 | 2027-01-16 | RHD4CZ2L102PT2301, RHD4CZ2L102PT3200 |
|  | 993 | **RHD4-02-002-L102-(PT)-Wash out Valves** |  | 2027-01-12 | 2027-01-18 |  |
| RHD4CZ2L102PT3102 |  | Installation for Wash out Valves for Potable Water Network - (RD-L-10/2)-Z2-L102-PT | 2d | 2027-01-12 | 2027-01-13 | RHD4PRSHLDOSPT1200, RHD4PRSHLSTAGPT1200, RHD4CZ2L102PT2301 SS |
| RHD4CZ2L102PT3202 |  | Stem and Service box for Wash out Valves for Potable Water Network - (RD-L-10/2)-Z2-L102-PT | 2d | 2027-01-17 | 2027-01-18 | RHD4PRSHLDOSPT1300, RHD4PRSHLSTAGPT1300, RHD4CZ2L102PT3102, RHD4CZ2L102PT2401 |
|  | 994 | **RHD4-02-002-L102-(PT)-Air Valve Chambers** |  | 2027-01-10 | 2027-01-18 |  |
| RHD4CZ2L102PT2102 |  | Excavation and Bedding for Air Valve Chambers for Potable Water Network - (RD-L-10/2)-Z2-L102-PT | 2d | 2027-01-10 | 2027-01-11 | RHD4ENSDZ2APPPT130, RHD4CZ2L102PT1501, RHD4CZ2L102PT1500 |
| RHD4CZ2L102PT2202 |  | PC works for Air Valve Chambers for Potable Water Network - (RD-L-10/2)-Z2-L102-PT | 2d | 2027-01-12 | 2027-01-13 | RHD4CZ2L102PT2102 |
| RHD4CZ2L102PT2302 |  | Installation for Air Valve Chambers for Potable Water Network - (RD-L-10/2)-Z2-L102-PT | 2d | 2027-01-14 | 2027-01-16 | RHD4PRSHLDOSPT1100, RHD4PRSHLDOSPT1400, RHD4PRSHLSTAGPT1100, RHD4PRSHLSTAGPT1400, RHD4CZ2L102PT2202 |
| RHD4CZ2L102PT2402 |  | Backfilling works for Air Valve Chambers for Potable Water Network - (RD-L-10/2)-Z2-L102-PT | 2d | 2027-01-17 | 2027-01-18 | RHD4CZ2L102PT2302 |
|  | 995 | **RHD4-02-002-L102-(PT)-Air Valves** |  | 2027-01-17 | 2027-01-20 |  |
| RHD4CZ2L102PT3103 |  | Installation for Air Valves for Potable Water Network - (RD-L-10/2)-Z2-L102-PT | 2d | 2027-01-17 | 2027-01-18 | RHD4PRSHLDOSPT1200, RHD4PRSHLSTAGPT1200, RHD4CZ2L102PT2302 |
| RHD4CZ2L102PT3203 |  | Stem and Service box for Air Valves for Potable Water Network - (RD-L-10/2)-Z2-L102-PT | 2d | 2027-01-19 | 2027-01-20 | RHD4PRSHLDOSPT1300, RHD4PRSHLSTAGPT1300, RHD4CZ2L102PT3103, RHD4CZ2L102PT2402 |
|  | 996 | **RHD4-02-002-L102-(PT)-Fire Hydrant** |  | 2027-01-10 | 2027-02-07 |  |
| RHD4CZ2L102PT4100 |  | Excavation and Bedding and Pipe Installation for Fire Hydrant - (RD-L-10/2)-Z2-L102-PT | 7d | 2027-01-10 | 2027-01-17 | RHD4ENSDZ2APPPT130, RHD4CZ2L102PT1501, RHD4CZ2L102PT1500 |
| RHD4CZ2L102PT4200 |  | Valve Installation for Fire Hydrant - (RD-L-10/2)-Z2-L102-PT | 5d | 2027-01-18 | 2027-01-23 | RHD4CZ2L102PT4100 |
| RHD4CZ2L102PT4300 |  | Stem for Fire Hydrant - (RD-L-10/2)-Z2-L102-PT | 5d | 2027-01-24 | 2027-01-28 | RHD4CZ2L102PT4200 |
| RHD4CZ2L102PT4400 |  | Fire Installation for Fire Hydrant - (RD-L-10/2)-Z2-L102-PT | 5d | 2027-01-30 | 2027-02-03 | RHD4PRSHLDOSPT1500, RHD4PRSHLSTAGPT1500, RHD4CZ2L102PT4300 |
| RHD4CZ2L102PT4500 |  | Protection Barriers for Fire Hydrant - (RD-L-10/2)-Z2-L102-PT | 3d | 2027-02-04 | 2027-02-07 | RHD4CZ2L102PT4400 |
|  | 997 | **RHD4-02-002-L102-(PT)-Concrete Encasement** |  |  |  |  |
|  | 998 | **RHD4-02-002-Z2-L102-Irrigation Network - IRR** |  | 2026-12-31 | 2027-02-11 |  |
|  | 1005 | **RHD4-02-002-L102-(IRR)-HDPE Pipes - 450 mm diameter** |  |  |  |  |
|  | 1004 | **RHD4-02-002-L102-(IRR)-HDPE Pipes - 400 mm diameter** |  |  |  |  |
|  | 1003 | **RHD4-02-002-L102-(IRR)-HDPE Pipes - 315 mm diameter** |  | 2026-12-31 | 2027-02-02 |  |
| RHD4CZ2L102IRR1104 |  | Excavation works for HDPE Pipline 315 mm - (RD-L-10/2)-Z2-L102-IRR | 7d | 2026-12-31 | 2027-01-07 | RHD4ENSDZ2APPIRR140, RHD4ENMSRR2000, RHD4CZ2L102PT1401, RHD4CZ2L102PT1101, RHD4CZ2L102PT1100, RHD4CZ9L05PT5100 |
| RHD4CZ2L102IRR1204 |  | Bedding works for HDPE Pipline 315 mm - (RD-L-10/2)-Z2-L102-IRR | 6d | 2027-01-09 | 2027-01-14 | RHD4CZ2L102IRR1104, RHD4CZ4A013PT4500 |
| RHD4CZ2L102IRR1304 |  | Installing for HDPE Pipline 315 mm - (RD-L-10/2)-Z2-L102-IRR | 7d | 2027-01-16 | 2027-01-23 | RHD4PRSHLDOSIRR1000, RHD4PRSHLSTAGIRR1000, RHD4CZ2L102IRR1204, RHD4CZ4L09IRR3200, RHD4CZ5L016IRR3203 |
| RHD4CZ2L102IRR1404 |  | Primary Test for HDPE Pipline 315 mm - (RD-L-10/2)-Z2-L102-IRR | 3d | 2027-01-24 | 2027-01-26 | RHD4CZ2L102IRR1304, RHD4CZ2L102IRR3100 |
| RHD4CZ2L102IRR1504 |  | Backfilling and warning tape works for HDPE Pipline 315 mm - (RD-L-10/2)-Z2-L102-IRR | 6d | 2027-01-27 | 2027-02-02 | RHD4CZ2L102IRR1404, RHD4CZ7L131SW1201 FF |
|  | 1001 | **RHD4-02-002-L102-(IRR)-HDPE Pipes - 200 mm diameter** |  |  |  |  |
|  | 6863 | **RHD4-02-002-L102-(IRR)-HDPE Pipes - 160 mm diameter** |  | 2026-12-31 | 2027-01-11 |  |
| RHD4CZ2L102IRR1100 |  | Excavation works for HDPE Pipline 160 mm - (RD-L-10/2)-Z2-L102-IRR | 2d | 2026-12-31 | 2027-01-02 | RHD4CZ2L102IRR1104 SS |
| RHD4CZ2L102IRR1200 |  | Bedding works for HDPE Pipline 160 mm - (RD-L-10/2)-Z2-L102-IRR | 2d | 2027-01-03 | 2027-01-04 | RHD4CZ2L102IRR1100 |
| RHD4CZ2L102IRR1300 |  | Installing for HDPE Pipline 160 mm - (RD-L-10/2)-Z2-L102-IRR | 2d | 2027-01-05 | 2027-01-06 | RHD4CZ2L102IRR1200 |
| RHD4CZ2L102IRR1400 |  | Primary Test for HDPE Pipline 160 mm - (RD-L-10/2)-Z2-L102-IRR | 2d | 2027-01-07 | 2027-01-09 | RHD4CZ2L102IRR1300 |
| RHD4CZ2L102IRR1500 |  | Backfilling and warning tape works for HDPE Pipline 160 mm - (RD-L-10/2)-Z2-L102-IRR | 2d | 2027-01-10 | 2027-01-11 | RHD4CZ2L102IRR1400, RHD4CZ2L102ST1502 |
|  | 1007 | **RHD4-02-002-L102-(IRR)-Gate Valves (Direct Buried)** |  | 2027-01-19 | 2027-02-11 |  |
| RHD4CZ2L102IRR3100 |  | Installation for Direct Buried Gate Valves - (RD-L-10/2)-Z2-L102-IRR | 4d | 2027-01-19 | 2027-01-23 | RHD4CZ7C02ST1500, RHD4PRSHLDOSIRR1100, RHD4PRSHLSTAGIRR1100, RHD4CZ2L102IRR1304 SS, RHD4CZ2L102IRR1304 FF, RHD4CZ9L05ST3500 |
| RHD4CZ2L102IRR3200 |  | Stem and Service box for Direct Buried Gate Valves - (RD-L-10/2)-Z2-L102-IRR | 8d | 2027-02-03 | 2027-02-11 | RHD4PRSHLDOSIRR1300, RHD4PRSHLSTAGIRR1300, RHD4CZ2L102IRR3100, RHD4CZ2L102IRR1504, RHD4CZ4L014IRR1503 |
|  | 1032 | **RHD4-02-002-Z2-L102-Medium Voltage Network - MV** |  | 2026-12-12 | 2027-02-09 |  |
|  | 1033 | **RHD4-02-002-L102-(MV)-Medium Voltage cable trench** |  | 2026-12-12 | 2027-02-01 |  |
| RHD4CZ2L102MV1100 |  | Excavation for Medium Voltage Trench - (RD-L-10/2)-Z2-L102-MV | 21d | 2026-12-12 | 2027-01-04 | RHD4ENSDZ2APPMV150, RHD4CZ2L102RD3100, RHD4CZ2L102PT1101 |
| RHD4CZ2L102MV1200 |  | Trench Backfilling for Medium Voltage Network - (RD-L-10/2)-Z2-L102-MV | 11d | 2027-01-20 | 2027-02-01 | RHD4CZ2L102MV3200, RHD4CZ2L102MV1100 |
|  | 1034 | **RHD4-02-002-L102-(MV)-Medium Voltage duct banks** |  |  |  |  |
|  | 1035 | **RHD4-02-002-L102-(MV)-Medium Voltage cables 3Cx 500 mm²** |  | 2027-01-05 | 2027-02-09 |  |
| RHD4CZ2L102MV3100 |  | Installation of Medium Voltage Cables 3Cx 500 mm² - (RD-L-10/2)-Z2-L102-MV | 9d | 2027-01-05 | 2027-01-14 | RHD4PRSHLDOSMV1100, RHD4ENMSMV2000, RHD4ENMSMV2010, RHD4PRSHLSTAGMV1100, RHD4CZ2L102MV1100 |
| RHD4CZ2L102MV3200 |  | Joints Installation of Medium Voltage Cables 3Cx 500 mm² - (RD-L-10/2)-Z2-L102-MV | 4d | 2027-01-16 | 2027-01-19 | RHD4PRSHLDOSMV1300, RHD4PRSHLSTAGMV1300, RHD4CZ2L102MV3100 |
| RHD4CZ2L102MV3300 |  | Testing of Medium Voltage Cables 3Cx 500 mm² - (RD-L-10/2)-Z2-L102-MV | 5d | 2027-02-02 | 2027-02-07 | RHD4CZ2L102MV3200, RHD4CZ2L102MV1200, RHD4CZ2L102MV4200 |
| RHD4CZ2L102MV3400 |  | Termination of Medium Voltage Cables 3Cx 500 mm² - (RD-L-10/2)-Z2-L102-MV | 2d | 2027-02-08 | 2027-02-09 | RHD4CZ2L102MV3300, RHD4CZ2L102MV1200 |
|  | 1036 | **RHD4-02-002-L102-(MV)-Medium Voltage cables 3Cx 50 mm²** |  | 2027-02-02 | 2027-02-03 |  |
| RHD4CZ2L102MV3401 |  | Termination of Medium Voltage Cables 3Cx 50 mm² - (RD-L-10/2)-Z2-L102-MV | 2d | 2027-02-02 | 2027-02-03 | RHD4CZ2L102MV1200, RHD4CZ2L102MV1100 |
|  | 1037 | **RHD4-02-002-L102-(MV)-Normally open Point (Outdoor Type)** |  | 2027-01-13 | 2027-01-17 |  |
| RHD4CZ2L102MV4100 |  | Installation for Normally open Point - (RD-L-10/2)-Z2-L102-MV | 2d | 2027-01-13 | 2027-01-14 | RHD4PRSHLDOSMV1400, RHD4PRSHLSTAGMV1400, RHD4CZ2L102MV3100 FF, RHD4CZ2L102MV1100 |
| RHD4CZ2L102MV4200 |  | Termination for Normally open Point - (RD-L-10/2)-Z2-L102-MV | 2d | 2027-01-16 | 2027-01-17 | RHD4CZ2L102MV4100 |
|  | 5390 | **RHD4-02-002-Z2-L102-Low Voltage Network - LV** |  | 2027-01-09 | 2027-01-26 |  |
|  | 5393 | **RHD4-02-002-L102-(LV)-Low Voltage cables** |  | 2027-01-09 | 2027-01-26 |  |
| RHD4CZ2L102LV3100 |  | Excavation for Low Voltage Cables for Low Voltage Network - (RD-L-10/2)-Z2-L102-LV | 5d | 2027-01-09 | 2027-01-13 | RHD4CZ2L102IRR1104 |
| RHD4CZ2L102LV3200 |  | Cable Laying of Low Voltage Cables for Low Voltage Network - (RD-L-10/2)-Z2-L102-LV | 4d | 2027-01-14 | 2027-01-18 | RHD4CZ2L102LV3100 |
| RHD4CZ2L102LV3300 |  | Warning tape and Backfill for Low Voltage Cables for Low Voltage Network - (RD-L-10/2)-Z2-L102-LV | 4d | 2027-01-19 | 2027-01-23 | RHD4CZ2L102LV3200 |
| RHD4CZ2L102LV3400 |  | Testing of Low Voltage Cables for Low Voltage Network - (RD-L-10/2)-Z2-L102 | 3d | 2027-01-24 | 2027-01-26 | RHD4CZ2L102LV3300, RHD4CZ2L102IRR1500, RHD4CZ1C081LV3400 |
|  | 1045 | **RHD4-02-002-Z2-L102-Street Lighting Network - SL** |  | 2027-01-21 | 2027-04-24 |  |
|  | 1046 | **RHD4-02-002-L102-(SL)-Street Lighting duct banks** |  | 2027-01-21 | 2027-02-09 |  |
| RHD4CZ2L102SL2100 |  | Excavation of Duct Banks for Street Lighting Network - (RD-L-10/2)-Z2-L102-SL | 4d | 2027-01-21 | 2027-01-25 | RHD4ENSDZ2APPSL170, RHD4CZ2L102PT3203 |

| ID | WBS | Task | Duration | Start | Finish | Predecessors |
| --- | --- | --- | --- | --- | --- | --- |
| RHD4CZ2L102SL2200 |  | Installation of Duct Banks for Street Lighting Network - (RD-L-10/2)-Z2-L102-SL | 6d | 2027-01-26 | 2027-02-01 | RHD4PRSHLDOSSL1000, RHD4PRSHLSTAGSL1000, RHD4CZ2L102SL2100 |
| RHD4CZ2L102SL2300 |  | Pouring of Duct Banks for Street Lighting Network - (RD-L-10/2)-Z2-L102-SL | 4d | 2027-02-02 | 2027-02-06 | RHD4CZ2L102SL2200 |
| RHD4CZ2L102SL2400 |  | Backfilling of Duct Banks for Street Lighting Network - (RD-L-10/2)-Z2-L102-SL | 3d | 2027-02-07 | 2027-02-09 | RHD4CZ2L102SL2300 |
|  | 1047 | **RHD4-02-002-L102-(SL)-Street Lighting Drawpit** |  | 2027-02-07 | 2027-02-10 |  |
| RHD4CZ2L102SL5100 |  | Excavation of Drawpit size 600x600x900mm for Street Lighting Network - (RD-L-10/2)-Z2-L102-SL | 2d | 2027-02-07 | 2027-02-08 | RHD4ENSDZ2APPSL170, RHD4CZ2L102SL2300, RHD4CZ2L102MV4200, RHD4CZ2L102LV3100 |
| RHD4CZ2L102SL5200 |  | Installation of Drawpit size 600x600x900mm for Street Lighting Network - (RD-L-10/2)-Z2-L102-SL | 2d | 2027-02-09 | 2027-02-10 | RHD4PRSHLDOSSL1400, RHD4PRSHLSTAGSL1400, RHD4CZ2L102SL5100 |
|  | 1048 | **RHD4-02-002-L102-(SL)-Street Lighting cables** |  | 2027-03-02 | 2027-04-08 |  |
| RHD4CZ2L102SL3100 |  | Excavation for Street Lighting Cables for Street Lighting Network - (RD-L-10/2)-Z2-L102-SL | 9d | 2027-03-02 | 2027-03-15 | RHD4ENSDZ2APPSL170, RHD4CZ2L102SL1300, RHD4CZ2L102MV3401, RHD4CZ2L102MV3400 |
| RHD4CZ2L102SL3200 |  | Cable Laying of Street Lighting Cables for Street Lighting Network - (RD-L-10/2)-Z2-L102-SL | 8d | 2027-03-16 | 2027-03-24 | RHD4PRSHLDOSSL1100, RHD4ENMSSL2000, RHD4ENMSSL2010, RHD4PRSHLSTAGSL1100, RHD4CZ2L102SL3100 |
| RHD4CZ2L102SL3300 |  | Warning tape and Backfill for Street Lighting Cables for Street Lighting Network - (RD-L-10/2)-Z2-L102-SL | 8d | 2027-03-25 | 2027-04-03 | RHD4CZ2L102SL3200 |
| RHD4CZ2L102SL3400 |  | Testing of Street Lighting Cables for Street Lighting Network - (RD-L-10/2)-Z2-L102-SL | 5d | 2027-04-04 | 2027-04-08 | RHD4CZ2L102SL3300 |
|  | 1049 | **RHD4-02-002-L102-(SL)-Street Lighting Poles** |  | 2027-02-11 | 2027-04-24 |  |
| RHD4CZ2L102SL1100 |  | Excavation for RC Base for Lighting Poles for Street Lighting Network - (RD-L-10/2)-Z2-L102-SL | 5d | 2027-02-11 | 2027-02-16 | RHD4ENSDZ2APPSL170, RHD4CZ2L102SL2400, RHD4CZ2L102MV1200, RHD4CZ2L102SL5200 |
| RHD4CZ2L102SL1200 |  | Installation for RC Base for Lighting Poles for Street Lighting Network - (RD-L-10/2)-Z2-L102-SL | 5d | 2027-02-17 | 2027-02-23 | RHD4CZ2L102SL1100 |
| RHD4CZ2L102SL1300 |  | Backfill for RC Base for Lighting Poles for Street Lighting Network - (RD-L-10/2)-Z2-L102-SL | 5d | 2027-02-24 | 2027-03-01 | RHD4CZ2L102SL1200 |
| RHD4CZ2L102SL1400 |  | Installation for Lighting Poles for Street Lighting Network - (RD-L-10/2)-Z2-L102-SL | 8d | 2027-04-10 | 2027-04-18 | RHD4PRSHLDOSSL1200, RHD4ENMSSL2000, RHD4ENMSSL2010, RHD4PRSHLSTAGSL1200, RHD4CZ2L102SL1300, RHD4CZ2L102SL3400 |
| RHD4CZ2L102SL1500 |  | Luminaire Installation for Lighting Poles for Street Lighting Network - (RD-L-10/2)-Z2-L102-SL | 5d | 2027-04-19 | 2027-04-24 | RHD4PRSHLDOSSL1300, RHD4PRSHLSTAGSL1300, RHD4CZ2L102SL1400 |
|  | 1051 | **RHD4-02-002-L102-(SL)-Street Lighting Earthing System** |  | 2027-04-19 | 2027-04-20 |  |
| RHD4CZ2L102SL6100 |  | Installation of Earthing for Lighting Poles and Fedder Pillers for Street Lighting Network - (RD-L-10/2)-Z2-L102-SL | 2d | 2027-04-19 | 2027-04-20 | RHD4ENMSER2000, RHD4ENMSER2010, RHD4CZ2L102SL1400, RHD4CZ2L102SL3300 |
|  | 1057 | **RHD4-02-002-Z2-L102-Telecommunications Network - TC** |  | 2027-04-21 | 2027-06-13 |  |
|  | 1058 | **RHD4-02-002-L102-(TC)-Telecommunications Ducts** |  | 2027-04-21 | 2027-06-13 |  |
| RHD4CZ2L102TC2100 |  | Excavation of HDPE Ducts for Telecom Network - (RD-L-10/2)-Z2-L102-TC | 15d | 2027-04-21 | 2027-05-08 | RHD4ENSDZ2APPTC190, RHD4CZ2L102SL2400, RHD4CZ2L102SL2300, RHD4CZ2L102SL2200, RHD4CZ2L102SL2100, RHD4CZ2L102SL3300, RHD4CZ2L102SL6100 |
| RHD4CZ2L102TC2200 |  | Installation of HDPE Ducts for Telecom Network - (RD-L-10/2)-Z2-L102-TC | 9d | 2027-05-09 | 2027-05-23 | RHD4PRSHLDOSTC1000, RHD4PRSHLSTAGTC1000, RHD4CZ2L102TC2100 |
| RHD4CZ2L102TC2400 |  | Backfilling of HDPE Ducts for Telecom Network - (RD-L-10/2)-Z2-L102-TC | 15d | 2027-05-27 | 2027-06-13 | RHD4CZ2L102TC2200, RHD4CZ2L102TC5200 |
|  | 1059 | **RHD4-02-002-L102-(TC)-Telecommunications Manholes** |  | 2027-05-09 | 2027-05-26 |  |
| RHD4CZ2L102TC5100 |  | Excavation for Manholes for Telecom Network - (RD-L-10/2)-Z2-L102-TC | 6d | 2027-05-09 | 2027-05-19 | RHD4ENSDZ2APPTC190, RHD4CZ2L102TC2100, RHD4CZ2L102SL6100 |
| RHD4CZ2L102TC5200 |  | Installation of Manholes for Telecom Network - (RD-L-10/2)-Z2-L102-TC | 6d | 2027-05-20 | 2027-05-26 | RHD4PRSHLDOSTC1200, RHD4PRSHLSTAGTC1200, RHD4CZ2L102TC5100, RHD4CZ2L102TC2200 SS |
|  | 1061 | **RHD4-02-002-Z2-L102-Information and Communication Technologies - ICT** |  | 2027-04-21 | 2027-06-13 |  |
|  | 1062 | **RHD4-02-002-L102-(ICT)-Information and Communication Technologies Ducts** |  | 2027-04-21 | 2027-06-13 |  |
| RHD4CZ2L102ICT2100 |  | Excavation of HDPE Ducts for ICT Network - (RD-L-10/2)-Z2-L102-ICT | 15d | 2027-04-21 | 2027-05-08 | RHD4ENSDZ2APPICT200, RHD4CZ2L102SL2100, RHD4CZ2L102SL2200, RHD4CZ2L102SL2300, RHD4CZ2L102SL2400, RHD4CZ2L102SL3300, RHD4CZ2L102SL6100 |
| RHD4CZ2L102ICT2200 |  | Installation of HDPE Ducts for ICT Network - (RD-L-10/2)-Z2-L102-ICT | 9d | 2027-05-09 | 2027-05-23 | RHD4PRSHLDOSICT1000, RHD4PRSHLSTAGICT1000, RHD4CZ2L102ICT2100 |
| RHD4CZ2L102ICT2400 |  | Backfilling of HDPE Ducts for ICT Network - (RD-L-10/2)-Z2-L102-ICT | 15d | 2027-05-27 | 2027-06-13 | RHD4CZ2L102ICT2200, RHD4CZ2L102ICT5200 |
|  | 1063 | **RHD4-02-002-L102-(ICT)-Information and Communication Technologies Manholes** |  | 2027-05-09 | 2027-05-26 |  |
| RHD4CZ2L102ICT5100 |  | Excavation for Manholes for ICT Network - (RD-L-10/2)-Z2-L102-ICT | 6d | 2027-05-09 | 2027-05-19 | RHD4ENSDZ2APPICT200, RHD4CZ2L102ICT2100, RHD4CZ2L102SL6100 |
| RHD4CZ2L102ICT5200 |  | Installation of Manholes for ICT Network - (RD-L-10/2)-Z2-L102-ICT | 6d | 2027-05-20 | 2027-05-26 | RHD4PRSHLDOSICT1200, RHD4PRSHLSTAGICT1200, RHD4CZ2L102ICT5100 |
|  | 1052 | **RHD4-02-002-Z2-L102-Landscape Network - LS** |  |  |  |  |
|  | 1053 | **RHD4-02-002-L102-(LS)-Landscape Lighting cables** |  |  |  |  |
|  | 1054 | **RHD4-02-002-L102-(LS)-Landscape Feeder Pillars** |  |  |  |  |
|  | 1055 | **RHD4-02-002-L102-(LS)-Landscape Bollard Poles** |  |  |  |  |
|  | 1056 | **RHD4-02-002-L102-(LS)-Landscape Feeder Pillars Earthing** |  |  |  |  |
|  | 1065 | **RHD4-02-002-Z2-L102-Security Network - CCTV** |  | 2027-06-14 | 2027-07-28 |  |
|  | 1066 | **RHD4-02-002-L102-(CCTV)-Civil Works** |  | 2027-06-14 | 2027-06-24 |  |
| RHD4CZ2L102CCTV2100 |  | Civil Works for Security Network - (RD-L-10/2)-Z2-L102-CCTV | 10d | 2027-06-14 | 2027-06-24 | RHD4CZ2L102ICT2400, RHD4CZ2L102TC2400 |
|  | 1067 | **RHD4-02-002-L102-(CCTV)-CCTV Poles** |  | 2027-06-26 | 2027-07-06 |  |
| RHD4CZ2L102CCTV1100 |  | Excavation for RC Base for CCTV Poles for Security Network - (RD-L-10/2)-Z2-L102-CCTV | 2d | 2027-06-26 | 2027-06-27 | RHD4ENSDZ2APPCCTV210, RHD4CZ2L102CCTV2100, RHD4CZ2L102CCTV2100 FF |
| RHD4CZ2L102CCTV1200 |  | Installation for RC Base for CCTV Poles for Security Network - (RD-L-10/2)-Z2-L102-CCTV | 2d | 2027-06-28 | 2027-06-29 | RHD4CZ2L102CCTV1100 |
| RHD4CZ2L102CCTV1300 |  | Backfill for RC Base for CCTV Poles for Security Network - (RD-L-10/2)-Z2-L102-CCTV | 2d | 2027-06-30 | 2027-07-01 | RHD4CZ2L102CCTV1200 |
| RHD4CZ2L102CCTV1400 |  | Installation for CCTV Poles for Security Network - (RD-L-10/2)-Z2-L102-CCTV | 2d | 2027-07-03 | 2027-07-04 | RHD4PRSHLDOSCCTV1000, RHD4PRSHLSTACCTV1000, RHD4CZ2L102CCTV1300 |
| RHD4CZ2L102CCTV1500 |  | Protection post Installation for CCTV Poles for Security Network - (RD-L-10/2)-Z2-L102-CCTV | 2d | 2027-07-05 | 2027-07-06 | RHD4CZ2L102CCTV1400 |
|  | 1068 | **RHD4-02-002-L102-(CCTV)-Camera** |  | 2027-07-10 | 2027-07-11 |  |
| RHD4CZ2L102CCTV3100 |  | Installation for Cameras for Security Network - (RD-L-10/2)-Z2-L102-CCTV | 2d | 2027-07-10 | 2027-07-11 | RHD4PRSHLDOSCCTV1100, RHD4PRSHLSTACCTV1100, RHD4CZ2L102CCTV1400, RHD4CZ2L102CCTV4100, RHD4CZ2L102CCTV4200, RHD4CZ2L102CCTV1500 |
|  | 1069 | **RHD4-02-002-L102-(CCTV)-Power and Infrastructure** |  | 2027-07-05 | 2027-07-08 |  |
| RHD4CZ2L102CCTV4100 |  | Installation of Power outlet, UPS and midspan for PTZ Camerafor Cameras for Security Network - (RD-L-10/2)-Z2-L102-CCTV | 2d | 2027-07-05 | 2027-07-06 | RHD4PRSHLDOSCCTV1300, RHD4PRSHLSTACCTV1300, RHD4CZ2L102CCTV1400 |
| RHD4CZ2L102CCTV4200 |  | Short Range Wireless PoP wireless Bridgefor CCTV Poles for Security Network - (RD-L-10/2)-Z2-L102-CCTV | 2d | 2027-07-07 | 2027-07-08 | RHD4CZ2L102CCTV4100 |
|  | 1071 | **RHD4-02-002-L102-(CCTV)-CCTV Panels and Components** |  | 2027-07-12 | 2027-07-28 |  |
| RHD4CZ2L102CCTV6100 |  | Installation for CCTV Panels for Security Network - (RD-L-10/2)-Z2-L102-CCTV | 15d | 2027-07-12 | 2027-07-28 | RHD4PRSHLDOSCCTV1200, RHD4PRSHLSTACCTV1200, RHD4PRLOLSTACCTV1001, RHD4CZ2L102CCTV4200, RHD4CZ2L102CCTV3100 |
|  | 1082 | **RHD4-02-002-Z2-L011** |  | 2026-08-25 | 2027-01-25 |  |
|  | 1261 | **RHD4-02-002-Z2-L011-Road Works - RD** |  | 2026-09-22 | 2027-01-25 |  |
|  | 1262 | **RHD4-02-002-L011-(RD)-Subgrade** |  | 2026-09-22 | 2026-09-24 |  |
| RHD4CZ2L011RD1100 |  | Supply, lay and compaction subgrade compacted thickness 300 mm for Roads - (RD-L-11)-Z2-L011-RD | 2d | 2026-09-22 | 2026-09-24 | RHD4ENSDZ2APPEW100, RHD4ENSDZ2APPRD220, RHD4CZ2L011ST3500, RHD4CZ2L011ST1500, RHD4CZ2L011ST2500, RHD4CZ2L011ST7500, RHD4CZ2L011ICT3400, RHD4CZ2L011TC3400 |
|  | 1263 | **RHD4-02-002-L011-(RD)-Aggregate Base Course** |  | 2026-09-26 | 2026-09-27 |  |
| RHD4CZ2L011RD2100 |  | Supply, lay and compaction Aggregate base course compacted thickness 300 mmfor Roads - (RD-L-11)-Z2-L011-RD | 2d | 2026-09-26 | 2026-09-27 | RHD4PRSHLDOSRD1000, RHD4PRSHLSTAGRD1000, RHD4CZ2L011RD1100 |
|  | 1264 | **RHD4-02-002-L011-(RD)-Bituminous base course Two Layers, including (MC1)&(RC2)** |  | 2026-09-29 | 2027-01-14 |  |
| RHD4CZ2L011RD3100 |  | Supply, lay and Asphaltic base course including Prime Coat (MC1) for 1st Layer - (RD-L-11)-Z2-L011-RD | 2d | 2026-09-29 | 2026-09-30 | RHD4PRSHLDOSRD1100, RHD4ENMSASPH2000, RHD4ENMSASPH2010, RHD4PRSHLSTAGRD1100, RHD4CZ2L011RD2100, RHD4CZ2L102RD3100 SS, RHD4CZ9L02RD3100, RHD4CZ3L122RD3100 |
| RHD4CZ2L011RD3200 |  | Supply, lay and Asphaltic base course including Tack Coat (RC2) for 2nd Layer - (RD-L-11)-Z2-L011-RD | 2d | 2027-01-13 | 2027-01-14 | RHD4PRSHLDOSRD1100, RHD4PRSHLSTAGRD1100, RHD4CZ2L011RD3100, RHD4CZ2L011TC2400, RHD4CZ2L011ICT2400 |
|  | 1266 | **RHD4-02-002-L011-(RD)-Precast Concrete Curb** |  | 2027-01-16 | 2027-01-18 |  |
| RHD4CZ2L011RD5100 |  | Supply and installation Precast Concrete Kerb for Roads - (RD-L-11)-Z2-L011-RD | 3d | 2027-01-16 | 2027-01-18 | RHD4PRSHLDOSRD1200, RHD4ENMSRD2000, RHD4ENMSRD2010, RHD4PRSHLSTAGRD1200, RHD4CZ2L011RD3200 |
|  | 1269 | **RHD4-02-002-L011-(RD)-Traffic Signage** |  | 2027-01-19 | 2027-01-25 |  |
| RHD4CZ2L011RD8100 |  | Installation of Traffic Signage for Road Network - (RD-L-11)-Z2-L011-RD | 6d | 2027-01-19 | 2027-01-25 | RHD4PRSHLDOSRD1600, RHD4PRSHLSTAGRD1600, RHD4CZ2L011ICT2400, RHD4CZ2L011TC2400, RHD4CZ2L011RD5100, RHD4CZ2L011LV4300 |
|  | 1267 | **RHD4-02-002-L011-(RD)-Precast Interlocking Block Pavers** |  |  |  |  |

| ID | WBS | Task | Duration | Start | Finish | Predecessors |
| --- | --- | --- | --- | --- | --- | --- |
|  | 1265 | **RHD4-02-002-L011-(RD)-Bituminous concrete wearing course including tack coat (RC2)** |  | 2027-01-19 | 2027-01-20 |  |
| RHD4CZ2L011RD4100 |  | Supply, lay and compaction Asphaltic wearing course including tack Coat (RC2)for Road Network - (RD-L-11)-Z2-L011-RD | 2d | 2027-01-19 | 2027-01-20 | RHD4CZ2L011RD5100 |
|  | 1268 | **RHD4-02-002-L011-(RD)-Pavement Marking** |  | 2027-01-21 | 2027-01-23 |  |
| RHD4CZ2L011RD7100 |  | Pavement Markings for Road Network - (RD-L-11)-Z2-L011-RD | 2d | 2027-01-21 | 2027-01-23 | RHD4PRSHLDOSRD1500, RHD4PRSHLSTAGRD1500, RHD4CZ2L011RD4100 |
|  | 1086 | **RHD4-02-002-Z2-L011-Storm Network - ST** |  | 2026-08-25 | 2026-09-16 |  |
|  | 1103 | **RHD4-02-002-L011-(ST)-MH Works - 1200 mm diameter** |  | 2026-08-25 | 2026-09-16 |  |
| RHD4CZ2L011ST3100 |  | Excavation and PC Blinding works for MH 1200 mm - (RD-L-11)-Z2-L011-ST | 2d | 2026-08-25 | 2026-08-26 | RHD4ENSDZ2APPST110, RHD4ENMSST2000, RHD4ENMSST2010, RHD4CZ2C082ST1106, RHD4PRSHLDOSST1001 |
| RHD4CZ2L011ST3200 |  | Installation of Base for MH 1200 mm - (RD-L-11)-Z2-L011-ST | 2d | 2026-08-27 | 2026-08-29 | RHD4PRSHLSTAGST1601, RHD4CZ2L011ST3100 |
| RHD4CZ2L011ST3300 |  | MH Ring and C.Slab works and Backfilling works for MH 1200 mm - (RD-L-11)-Z2-L011-ST | 2d | 2026-08-30 | 2026-08-31 | RHD4PRSHLDOSST1601, RHD4CZ2L011ST3200 |
| RHD4CZ2L011ST3400 |  | Steel Cover for MH 1200 mm - (RD-L-11)-Z2-L011-ST | 2d | 2026-09-13 | 2026-09-14 | RHD4PRSHLDOSST1701, RHD4PRSHLSTAGST1701, RHD4CZ2L011ST2500, RHD4CZ2L011ST1500, RHD4CZ2L011ST3300 |
| RHD4CZ2L011ST3500 |  | Finishing, Benching, Testing works for MH 1200 mm - (RD-L-11)-Z2-L011-ST | 2d | 2026-09-15 | 2026-09-16 | RHD4CZ2L011ST3400 |
|  | 1087 | **RHD4-02-002-L011-(ST)-GRP Pipes - 400 mm diameter** |  | 2026-08-30 | 2026-09-09 |  |
| RHD4CZ2L011ST1100 |  | Excavation works for GRP Pipe Line 400 mm - (RD-L-11)-Z2-L011-ST | 2d | 2026-08-30 | 2026-08-31 | RHD4ENSDZ2APPST110, RHD4CZ2L011ST3300 SS |
| RHD4CZ2L011ST1200 |  | Bedding works for GRP Pipe Line 400 mm - (RD-L-11)-Z2-L011-ST | 2d | 2026-09-01 | 2026-09-02 | RHD4CZ2L011ST1100 |
| RHD4CZ2L011ST1300 |  | Installing for GRP Pipe Line 400 mm - (RD-L-11)-Z2-L011-ST | 2d | 2026-09-03 | 2026-09-05 | RHD4PRSHLSTAGST1001, RHD4CZ2L011ST1200, RHD4PRSHLPOST1000, RHD4PRSHLDOSST1001 |
| RHD4CZ2L011ST1400 |  | Primary Test for GRP Pipe Line 400 mm - (RD-L-11)-Z2-L011-ST | 2d | 2026-09-06 | 2026-09-07 | RHD4CZ2L011ST1300 |
| RHD4CZ2L011ST1500 |  | Backfilling and warning tape works for GRP Pipe Line 400 mm - (RD-L-11)-Z2-L011-ST | 2d | 2026-09-08 | 2026-09-09 | RHD4CZ2L011ST1400 |
|  | 1101 | **RHD4-02-002-L011-(ST)-UPVC Pipes - 300 mm diameter** |  | 2026-09-01 | 2026-09-12 |  |
| RHD4CZ2L011ST2100 |  | Excavation works for UPVC Pipe Line 300 mm - (RD-L-11)-Z2-L011-ST | 2d | 2026-09-01 | 2026-09-02 | RHD4ENSDZ2APPST110, RHD4CZ2L011ST1100 |
| RHD4CZ2L011ST2200 |  | Bedding works for UPVC Pipe Line 300 mm - (RD-L-11)-Z2-L011-ST | 2d | 2026-09-03 | 2026-09-05 | RHD4CZ2L011ST2100 |
| RHD4CZ2L011ST2300 |  | Installing for UPVC Pipe Line 300 mm - (RD-L-11)-Z2-L011-ST | 2d | 2026-09-06 | 2026-09-07 | RHD4PRSHLDOSST1101, RHD4PRSHLSTAGST1101, RHD4CZ2L011ST2200 |
| RHD4CZ2L011ST2400 |  | Primary Test for UPVC Pipe Line 300 mm - (RD-L-11)-Z2-L011-ST | 2d | 2026-09-08 | 2026-09-09 | RHD4CZ2L011ST2300 |
| RHD4CZ2L011ST2500 |  | Backfilling and warning tape works for UPVC Pipe Line 300 mm - (RD-L-11)-Z2-L011-ST | 2d | 2026-09-10 | 2026-09-12 | RHD4CZ2L011ST2400 |
|  | 1109 | **RHD4-02-002-L011-(ST)-Concrete Encasement** |  |  |  |  |
|  | 1110 | **RHD4-02-002-Z2-L011-Catch Basin - ST** |  | 2026-09-01 | 2026-09-12 |  |
|  | 1111 | **RHD4-02-002-L011-(ST)-Single Catch Basin Works** |  | 2026-09-01 | 2026-09-12 |  |
| RHD4CZ2L011ST7100 |  | Excavation works for Single Catch Basin - (RD-L-11)-Z2-L011-ST | 2d | 2026-09-01 | 2026-09-02 | RHD4ENSDZ2APPST110, RHD4CZ2L011ST3300, RHD4CZ2L011ST3300 SS |
| RHD4CZ2L011ST7200 |  | PC Blinding, Installation and Pipe connection for Single Catch Basin - (RD-L-11)-Z2-L011-ST | 2d | 2026-09-03 | 2026-09-05 | RHD4CZ2L011ST7100 |
| RHD4CZ2L011ST7300 |  | Rings & C.Slab & Final Backfill for Single Catch Basin - (RD-L-11)-Z2-L011-ST | 2d | 2026-09-06 | 2026-09-07 | RHD4PRSHLDOSST1301, RHD4PRSHLSTAGST1301, RHD4CZ2L011ST7200 |
| RHD4CZ2L011ST7400 |  | Steel Cover for Single Catch Basin - (RD-L-11)-Z2-L011-ST | 2d | 2026-09-08 | 2026-09-09 | RHD4PRSHLDOSST1701, RHD4CZ2L011ST7300 |
| RHD4CZ2L011ST7500 |  | Finishing and Insulation works for Single Catch Basin - (RD-L-11)-Z2-L011-ST | 2d | 2026-09-10 | 2026-09-12 | RHD4CZ2L011ST7400 |
|  | 1172 | **RHD4-02-002-Z2-L011-Potable Network - PT** |  | 2026-09-17 | 2026-10-29 |  |
|  | 1175 | **RHD4-02-002-L011-(PT)-HDPE Pipes - 200 mm diameter** |  |  |  |  |
|  | 1174 | **RHD4-02-002-L011-(PT)-HDPE Pipes - 160 mm diameter** |  | 2026-09-17 | 2026-09-29 |  |
| RHD4CZ2L011PT1101 |  | Excavation works for HDPE Pipline 160 mm - (RD-L-11)-Z2-L011-PT | 2d | 2026-09-17 | 2026-09-19 | RHD4ENSDZ2APPPT130, RHD4ENMSPT2000, RHD4CZ2L011ST2500, RHD4CZ2L011ST3500 |
| RHD4CZ2L011PT1201 |  | Bedding works for HDPE Pipline 160 mm - (RD-L-11)-Z2-L011-PT | 2d | 2026-09-20 | 2026-09-21 | RHD4CZ2L011PT1101 |
| RHD4CZ2L011PT1301 |  | Installing for HDPE Pipline 160 mm - (RD-L-11)-Z2-L011-PT | 2d | 2026-09-22 | 2026-09-24 | RHD4PRSHLDOSPT1000, RHD4CZ3L122ST1507, RHD4PRSHLSTAGPT1000, RHD4CZ2L011PT1201 |
| RHD4CZ2L011PT1401 |  | Primary Test for HDPE Pipline 160 mm - (RD-L-11)-Z2-L011-PT | 2d | 2026-09-26 | 2026-09-27 | RHD4CZ2L011PT1301 |
| RHD4CZ2L011PT1501 |  | Backfilling and warning tape works for HDPE Pipline 160 mm - (RD-L-11)-Z2-L011-PT | 2d | 2026-09-28 | 2026-09-29 | RHD4CZ2L011PT1401 |
|  | 1178 | **RHD4-02-002-L011-(PT)-Gate Valves (Direct Buried)** |  | 2026-09-30 | 2026-10-04 |  |
| RHD4CZ2L011PT3100 |  | Installation for Direct Buried Gate Valves - (RD-L-11)-Z2-L011-PT | 2d | 2026-09-30 | 2026-10-01 | RHD4PRSHLDOSPT1200, RHD4PRSHLSTAGPT1200, RHD4CZ2L011PT1301 SS, RHD4CZ2L011PT1301, RHD4CZ2L011PT1501 |
| RHD4CZ2L011PT3200 |  | Stem and Service box for Direct Buried Gate Valves - (RD-L-11)-Z2-L011-PT | 2d | 2026-10-03 | 2026-10-04 | RHD4PRSHLDOSPT1300, RHD4PRSHLSTAGPT1300, RHD4CZ2L011PT3100, RHD4CZ2L011PT1501, RHD4CZ2L011PT1401 |
|  | 1183 | **RHD4-02-002-L011-(PT)-Air Valve Chambers** |  | 2026-10-05 | 2026-10-13 |  |
| RHD4CZ2L011PT2102 |  | Excavation and Bedding for Air Valve Chambers for Potable Water Network - (RD-L-11)-Z2-L011-PT | 2d | 2026-10-05 | 2026-10-06 | RHD4ENSDZ2APPPT130, RHD4CZ2L011PT1101, RHD4CZ2L011PT3200 |
| RHD4CZ2L011PT2202 |  | PC works for Air Valve Chambers for Potable Water Network - (RD-L-11)-Z2-L011-PT | 2d | 2026-10-07 | 2026-10-08 | RHD4CZ2L011PT2102 |
| RHD4CZ2L011PT2302 |  | Installation for Air Valve Chambers for Potable Water Network - (RD-L-11)-Z2-L011-PT | 2d | 2026-10-10 | 2026-10-11 | RHD4PRSHLDOSPT1100, RHD4PRSHLDOSPT1400, RHD4PRSHLSTAGPT1100, RHD4PRSHLSTAGPT1400, RHD4CZ2L011PT2202, RHD4CZ2L011PT3200 |
| RHD4CZ2L011PT2402 |  | Backfilling works for Air Valve Chambers for Potable Water Network - (RD-L-11)-Z2-L011-PT | 2d | 2026-10-12 | 2026-10-13 | RHD4CZ2L011PT2302 |
|  | 1184 | **RHD4-02-002-L011-(PT)-Air Valves** |  | 2026-10-14 | 2026-10-18 |  |
| RHD4CZ2L011PT3103 |  | Installation for Air Valves for Potable Water Network - (RD-L-11)-Z2-L011-PT | 2d | 2026-10-14 | 2026-10-15 | RHD4PRSHLDOSPT1200, RHD4PRSHLSTAGPT1200, RHD4CZ2L011PT2302, RHD4CZ2L011PT2402 |
| RHD4CZ2L011PT3203 |  | Stem and Service box for Air Valves for Potable Water Network - (RD-L-11)-Z2-L011-PT | 2d | 2026-10-17 | 2026-10-18 | RHD4PRSHLDOSPT1300, RHD4PRSHLSTAGPT1300, RHD4CZ2L011PT3103, RHD4CZ2L011PT2402 |
|  | 1185 | **RHD4-02-002-L011-(PT)-Fire Hydrant** |  | 2026-10-19 | 2026-10-29 |  |
| RHD4CZ2L011PT4100 |  | Excavation and Bedding and Pipe Installation for Fire Hydrant - (RD-L-11)-Z2-L011-PT | 2d | 2026-10-19 | 2026-10-20 | RHD4ENSDZ2APPPT130, RHD4CZ2L011PT1401, RHD4CZ2L011PT3203 |
| RHD4CZ2L011PT4200 |  | Valve Installation for Fire Hydrant - (RD-L-11)-Z2-L011-PT | 2d | 2026-10-21 | 2026-10-22 | RHD4CZ2L011PT4100 |
| RHD4CZ2L011PT4300 |  | Stem for Fire Hydrant - (RD-L-11)-Z2-L011-PT | 2d | 2026-10-24 | 2026-10-25 | RHD4CZ2L011PT4200 |
| RHD4CZ2L011PT4400 |  | Fire Installation for Fire Hydrant - (RD-L-11)-Z2-L011-PT | 2d | 2026-10-26 | 2026-10-27 | RHD4PRSHLDOSPT1500, RHD4PRSHLSTAGPT1500, RHD4CZ2L011PT4300 |
| RHD4CZ2L011PT4500 |  | Protection Barriers for Fire Hydrant - (RD-L-11)-Z2-L011-PT | 2d | 2026-10-28 | 2026-10-29 | RHD4CZ2L011PT4400 |
|  | 1186 | **RHD4-02-002-L011-(PT)-Concrete Encasement** |  |  |  |  |
|  | 1221 | **RHD4-02-002-Z2-L011-Medium Voltage Network - MV** |  | 2026-10-14 | 2026-11-30 |  |
|  | 1222 | **RHD4-02-002-L011-(MV)-Medium Voltage cable trench** |  | 2026-10-31 | 2026-11-16 |  |
| RHD4CZ2L011MV1100 |  | Excavation for Medium Voltage Trench - (RD-L-11)-Z2-L011-MV | 4d | 2026-10-31 | 2026-11-03 | RHD4ENSDZ2APPMV150, RHD4CZ2L011RD3100, RHD4CZ2L011PT4500 |
| RHD4CZ2L011MV1200 |  | Trench Backfilling for Medium Voltage Network - (RD-L-11)-Z2-L011-MV | 4d | 2026-11-12 | 2026-11-16 | RHD4CZ2L011MV3200 |
|  | 1223 | **RHD4-02-002-L011-(MV)-Medium Voltage duct banks** |  | 2026-10-14 | 2026-10-22 |  |
| RHD4CZ2L011MV2100 |  | Excavation of Duct Banks for Medium Voltage Network - (RD-L-11)-Z2-L011-MV | 2d | 2026-10-14 | 2026-10-15 | RHD4ENSDZ2APPMV150, RHD4CZ2L011PT2402 |
| RHD4CZ2L011MV2200 |  | Installation of Duct Banks for Medium Voltage Network - (RD-L-11)-Z2-L011-MV | 2d | 2026-10-17 | 2026-10-18 | RHD4PRSHLDOSMV1000, RHD4PRSHLSTAGMV1000, RHD4CZ2L011MV2100 |
| RHD4CZ2L011MV2300 |  | Pouring of Duct Banks for Medium Voltage Network - (RD-L-11)-Z2-L011-MV | 2d | 2026-10-19 | 2026-10-20 | RHD4CZ2L011MV2200 |
| RHD4CZ2L011MV2400 |  | Backfilling of Duct Banks for Medium Voltage Network - (RD-L-11)-Z2-L011-MV | 2d | 2026-10-21 | 2026-10-22 | RHD4CZ2L011MV2300 |
|  | 1224 | **RHD4-02-002-L011-(MV)-Medium Voltage cables 3Cx 500 mm²** |  | 2026-11-04 | 2026-11-18 |  |
| RHD4CZ2L011MV3100 |  | Installation of Medium Voltage Cables 3Cx 500 mm² - (RD-L-11)-Z2-L011-MV | 5d | 2026-11-04 | 2026-11-09 | RHD4PRSHLDOSMV1100, RHD4ENMSMV2000, RHD4ENMSMV2010, RHD4PRSHLSTAGMV1100, RHD4CZ2L011MV1100, RHD4CZ2L011MV2400 |
| RHD4CZ2L011MV3200 |  | Joints Installation of Medium Voltage Cables 3Cx 500 mm² - (RD-L-11)-Z2-L011-MV | 2d | 2026-11-10 | 2026-11-11 | RHD4PRSHLDOSMV1300, RHD4PRSHLSTAGMV1300, RHD4CZ2L011MV3100 |
| RHD4CZ2L011MV3300 |  | Testing of Medium Voltage Cables 3Cx 500 mm² - (RD-L-11)-Z2-L011-MV | 2d | 2026-11-17 | 2026-11-18 | RHD4CZ2L011MV3200, RHD4CZ2L011MV1200, RHD4CZ2L011MV3100 |

| ID | WBS | Task | Duration | Start | Finish | Predecessors |
| --- | --- | --- | --- | --- | --- | --- |
|  | 4254 | **RHD4-02-002-L011-(MV)-Unit Substations** |  | 2026-11-19 | 2026-11-30 |  |
| RHD4CZ2L011MV5100 |  | Excavation for Unit Substations for Medium Voltage Network - (RD-L-11)-Z2-L011-MV | 2d | 2026-11-19 | 2026-11-21 | RHD4CZ2L011MV3300 |
| RHD4CZ2L011MV5200 |  | Concrete Base Placement for Unit Substations for Medium Voltage Network - (RD-L-11)-Z2-L011-MV | 2d | 2026-11-22 | 2026-11-23 | RHD4CZ2L011MV5100 |
| RHD4CZ2L011MV5300 |  | Installation for Fences and doors for Medium Voltage Network - (RD-L-11)-Z2-L011-MV | 2d | 2026-11-24 | 2026-11-25 | RHD4CZ2L011MV5200 |
| RHD4CZ2L011MV5400 |  | Installation for Unit Substations for Medium Voltage Network - (RD-L-11)-Z2-L011-MV | 4d | 2026-11-26 | 2026-11-30 | RHD4CZ2L011MV5300 |
|  | 1228 | **RHD4-02-002-Z2-L011-Low Voltage Network - LV** |  | 2026-12-01 | 2027-01-09 |  |
|  | 1229 | **RHD4-02-002-L011-(LV)-Low Voltage duct banks** |  | 2026-12-01 | 2026-12-19 |  |
| RHD4CZ2L011LV2100 |  | Excavation of Duct Banks for Low Voltage Network - (RD-L-11)-Z2-L011-LV | 4d | 2026-12-01 | 2026-12-05 | RHD4ENSDZ2APPLV160, RHD4CZ2L011PT2402, RHD4CZ2L011MV5400 |
| RHD4CZ2L011LV2200 |  | Installation of Duct Banks for Low Voltage Network - (RD-L-11)-Z2-L011-LV | 5d | 2026-12-06 | 2026-12-10 | RHD4PRSHLDOSLV1000, RHD4PRSHLSTAGLV1000, RHD4CZ2L011LV2100 |
| RHD4CZ2L011LV2300 |  | Pouring of Duct Banks for Low Voltage Network - (RD-L-11)-Z2-L011-LV | 4d | 2026-12-12 | 2026-12-15 | RHD4CZ2L011LV2200 |
| RHD4CZ2L011LV2400 |  | Backfilling of Duct Banks for Low Voltage Network - (RD-L-11)-Z2-L011-LV | 3d | 2026-12-16 | 2026-12-19 | RHD4CZ2L011LV2300 |
|  | 1230 | **RHD4-02-002-L011-(LV)-Low Voltage Drawpit** |  | 2026-12-16 | 2026-12-20 |  |
| RHD4CZ2L011LV5100 |  | Excavation of Drawpit size 900x900x1000mm for Low Voltage Network - (RD-L-11)-Z2-L011-LV | 2d | 2026-12-16 | 2026-12-17 | RHD4ENSDZ2APPLV160, RHD4CZ2L011LV2300, RHD4CZ2L011MV5400 |
| RHD4CZ2L011LV5200 |  | Installation of Drawpit size 900x900x1000mm for Low Voltage Network - (RD-L-11)-Z2-L011-LV | 2d | 2026-12-19 | 2026-12-20 | RHD4PRSHLDOSLV1400, RHD4PRSHLSTAGLV1400, RHD4CZ2L011LV5100 |
|  | 1231 | **RHD4-02-002-L011-(LV)-Low Voltage cables** |  | 2026-12-01 | 2026-12-27 |  |
| RHD4CZ2L011LV3100 |  | Excavation for Low Voltage Cables for Low Voltage Network - (RD-L-11)-Z2-L011-LV | 3d | 2026-12-01 | 2026-12-03 | RHD4ENSDZ2APPLV160, RHD4CZ2L011MV1200, RHD4CZ2L011MV5400 |
| RHD4CZ2L011LV3200 |  | Cable Laying of Low Voltage Cables for Low Voltage Network - (RD-L-11)-Z2-L011-LV | 2d | 2026-12-21 | 2026-12-22 | RHD4PRSHLDOSLV1100, RHD4ENMSLV2000, RHD4ENMSLV2010, RHD4PRSHLSTAGLV1100, RHD4CZ2L011LV3100, RHD4CZ2L011LV5200 |
| RHD4CZ2L011LV3300 |  | Warning tape and Backfill for Low Voltage Cables for Low Voltage Network - (RD-L-11)-Z2-L011-LV | 2d | 2026-12-23 | 2026-12-24 | RHD4CZ2L011LV3200 |
| RHD4CZ2L011LV3400 |  | Testing of Low Voltage Cables for Low Voltage Network - (RD-L-11)-Z2-L011-LV | 2d | 2026-12-26 | 2026-12-27 | RHD4CZ2L011LV3300 |
|  | 4259 | **RHD4-02-002-L011-(LV)-Low Voltage Distribution Pillars** |  | 2026-12-28 | 2027-01-09 |  |
| RHD4CZ2L011LV4100 |  | Leveling for Distribution Pillars for Low Voltage Network - (RD-L-11)-Z2-L011-LV | 4d | 2026-12-28 | 2026-12-31 | RHD4CZ2L011LV3400 |
| RHD4CZ2L011LV4200 |  | Lean Concrete for Distribution Pillars for Low Voltage Network - (RD-L-11)-Z2-L011-LV | 3d | 2027-01-02 | 2027-01-04 | RHD4CZ2L011LV4100 |
| RHD4CZ2L011LV4300 |  | Installation of Distribution Pillars for Low Voltage Network - (RD-L-11)-Z2-L011-LV | 4d | 2027-01-05 | 2027-01-09 | RHD4CZ2L011LV4200, RHD4CZ2L011SL5200 |
|  | 1234 | **RHD4-02-002-Z2-L011-Street Lighting Network - SL** |  | 2026-12-01 | 2027-01-03 |  |
|  | 1235 | **RHD4-02-002-L011-(SL)-Street Lighting duct banks** |  |  |  |  |
|  | 1236 | **RHD4-02-002-L011-(SL)-Street Lighting Drawpit** |  | 2026-12-01 | 2026-12-05 |  |
| RHD4CZ2L011SL5100 |  | Excavation of Drawpit size 600x600x900mm for Street Lighting Network - (RD-L-11)-Z2-L011-SL | 2d | 2026-12-01 | 2026-12-02 | RHD4ENSDZ2APPSL170, RHD4CZ2L011MV5400 |
| RHD4CZ2L011SL5200 |  | Installation of Drawpit size 600x600x900mm for Street Lighting Network - (RD-L-11)-Z2-L011-SL | 2d | 2026-12-03 | 2026-12-05 | RHD4PRSHLDOSSL1400, RHD4PRSHLSTAGSL1400, RHD4CZ2L011SL5100 |
|  | 1237 | **RHD4-02-002-L011-(SL)-Street Lighting cables** |  | 2026-12-08 | 2026-12-29 |  |
| RHD4CZ2L011SL3100 |  | Excavation for Street Lighting Cables for Street Lighting Network - (RD-L-11)-Z2-L011-SL | 4d | 2026-12-08 | 2026-12-12 | RHD4ENSDZ2APPSL170, RHD4CZ2L011SL1300, RHD4CZ2L011MV3300 |
| RHD4CZ2L011SL3200 |  | Cable Laying of Street Lighting Cables for Street Lighting Network - (RD-L-11)-Z2-L011-SL | 3d | 2026-12-13 | 2026-12-15 | RHD4PRSHLDOSSL1100, RHD4ENMSSL2000, RHD4ENMSSL2010, RHD4PRSHLSTAGSL1100, RHD4CZ2L011SL3100 |
| RHD4CZ2L011SL3300 |  | Warning tape and Backfill for Street Lighting Cables for Street Lighting Network - (RD-L-11)-Z2-L011-SL | 3d | 2026-12-16 | 2026-12-19 | RHD4CZ2L011SL3200 |
| RHD4CZ2L011SL3400 |  | Testing of Street Lighting Cables for Street Lighting Network - (RD-L-11)-Z2-L011-SL | 2d | 2026-12-28 | 2026-12-29 | RHD4CZ2L011SL3300, RHD4CZ2L011LV3400 |
|  | 1238 | **RHD4-02-002-L011-(SL)-Street Lighting Poles** |  | 2026-12-01 | 2027-01-03 |  |
| RHD4CZ2L011SL1100 |  | Excavation for RC Base for Lighting Poles for Street Lighting Network - (RD-L-11)-Z2-L011-SL | 2d | 2026-12-01 | 2026-12-02 | RHD4ENSDZ2APPSL170, RHD4CZ2L011MV5400 |
| RHD4CZ2L011SL1200 |  | Installation for RC Base for Lighting Poles for Street Lighting Network - (RD-L-11)-Z2-L011-SL | 2d | 2026-12-03 | 2026-12-05 | RHD4CZ2L011SL1100 |
| RHD4CZ2L011SL1300 |  | Backfill for RC Base for Lighting Poles for Street Lighting Network - (RD-L-11)-Z2-L011-SL | 2d | 2026-12-06 | 2026-12-07 | RHD4CZ2L011SL1200 |
| RHD4CZ2L011SL1400 |  | Installation for Lighting Poles for Street Lighting Network - (RD-L-11)-Z2-L011-SL | 2d | 2026-12-30 | 2026-12-31 | RHD4PRSHLDOSSL1200, RHD4ENMSSL2000, RHD4ENMSSL2010, RHD4PRSHLSTAGSL1200, RHD4CZ2L011SL1300, RHD4CZ2L011SL3400 |
| RHD4CZ2L011SL1500 |  | Luminaire Installation for Lighting Poles for Street Lighting Network - (RD-L-11)-Z2-L011-SL | 2d | 2027-01-02 | 2027-01-03 | RHD4PRSHLDOSSL1300, RHD4PRSHLSTAGSL1300, RHD4CZ2L011SL1400 |
|  | 1246 | **RHD4-02-002-Z2-L011-Telecommunications Network - TC** |  | 2026-09-13 | 2027-01-07 |  |
|  | 1247 | **RHD4-02-002-L011-(TC)-Telecommunications Ducts** |  | 2026-12-30 | 2027-01-07 |  |
| RHD4CZ2L011TC2100 |  | Excavation of HDPE Ducts for Telecom Network - (RD-L-11)-Z2-L011-TC | 2d | 2026-12-30 | 2026-12-31 | RHD4ENSDZ2APPTC190, RHD4CZ2L011TC3400, RHD4CZ2L011LV3300, RHD4CZ2L011SL3400 |
| RHD4CZ2L011TC2200 |  | Installation of HDPE Ducts for Telecom Network - (RD-L-11)-Z2-L011-TC | 3d | 2027-01-02 | 2027-01-04 | RHD4PRSHLDOSTC1000, RHD4PRSHLSTAGTC1000, RHD4CZ2L011TC2100 |
| RHD4CZ2L011TC2400 |  | Backfilling of HDPE Ducts for Telecom Network - (RD-L-11)-Z2-L011-TC | 2d | 2027-01-06 | 2027-01-07 | RHD4CZ2L011TC2200, RHD4CZ2L011TC5200 |
|  | 1248 | **RHD4-02-002-L011-(TC)-Telecommunications Manholes** |  | 2027-01-02 | 2027-01-05 |  |
| RHD4CZ2L011TC5100 |  | Excavation for Manholes for Telecom Network - (RD-L-11)-Z2-L011-TC | 2d | 2027-01-02 | 2027-01-03 | RHD4ENSDZ2APPTC190, RHD4CZ2L011TC2100 |
| RHD4CZ2L011TC5200 |  | Installation of Manholes for Telecom Network - (RD-L-11)-Z2-L011-TC | 2d | 2027-01-04 | 2027-01-05 | RHD4PRSHLDOSTC1200, RHD4PRSHLSTAGTC1200, RHD4CZ2L011TC5100, RHD4CZ2L011TC2200 SS |
|  | 1249 | **RHD4-02-002-L011-(TC)-Telecomminications Road Crossings** |  | 2026-09-13 | 2026-09-21 |  |
| RHD4CZ2L011TC3100 |  | Excavation for Road Crossings for Telecom Network - (RD-L-11)-Z2-L011-TC | 2d | 2026-09-13 | 2026-09-14 | RHD4ENSDZ2APPTC190, RHD4CZ2L011ST2500 |
| RHD4CZ2L011TC3200 |  | Installation of Road Crossings for Telecom Network - (RD-L-11)-Z2-L011-TC | 2d | 2026-09-15 | 2026-09-16 | RHD4PRSHLDOSTC1100, RHD4PRSHLSTAGTC1100, RHD4CZ2L011TC3100 |
| RHD4CZ2L011TC3300 |  | Pouring of Road Crossings for Telecom Network - (RD-L-11)-Z2-L011-TC | 2d | 2026-09-17 | 2026-09-19 | RHD4CZ2L011TC3200 |
| RHD4CZ2L011TC3400 |  | Backfilling of Road Crossings for Telecom Network - (RD-L-11)-Z2-L011-TC | 2d | 2026-09-20 | 2026-09-21 | RHD4CZ2L011TC3300 |
|  | 1250 | **RHD4-02-002-Z2-L011-Information and Communication Technologies - ICT** |  | 2026-09-13 | 2027-01-12 |  |
|  | 1251 | **RHD4-02-002-L011-(ICT)-Information and Communication Technologies Ducts** |  | 2027-01-02 | 2027-01-12 |  |
| RHD4CZ2L011ICT2100 |  | Excavation of HDPE Ducts for ICT Network - (RD-L-11)-Z2-L011-ICT | 3d | 2027-01-02 | 2027-01-04 | RHD4ENSDZ2APPICT200, RHD4CZ2L011ICT3400, RHD4CZ2L011LV3300, RHD4CZ2L011TC2100 |
| RHD4CZ2L011ICT2200 |  | Installation of HDPE Ducts for ICT Network - (RD-L-11)-Z2-L011-ICT | 4d | 2027-01-05 | 2027-01-09 | RHD4PRSHLDOSICT1000, RHD4PRSHLSTAGICT1000, RHD4CZ2L011ICT2100 |
| RHD4CZ2L011ICT2400 |  | Backfilling of HDPE Ducts for ICT Network - (RD-L-11)-Z2-L011-ICT | 3d | 2027-01-10 | 2027-01-12 | RHD4CZ2L011ICT2200, RHD4CZ2L011ICT5200 |
|  | 1252 | **RHD4-02-002-L011-(ICT)-Information and Communication Technologies Manholes** |  | 2027-01-05 | 2027-01-09 |  |
| RHD4CZ2L011ICT5100 |  | Excavation for Manholes for ICT Network - (RD-L-11)-Z2-L011-ICT | 2d | 2027-01-05 | 2027-01-06 | RHD4ENSDZ2APPICT200, RHD4CZ2L011ICT2100 |
| RHD4CZ2L011ICT5200 |  | Installation of Manholes for ICT Network - (RD-L-11)-Z2-L011-ICT | 2d | 2027-01-07 | 2027-01-09 | RHD4PRSHLDOSICT1200, RHD4PRSHLSTAGICT1200, RHD4CZ2L011ICT5100, RHD4CZ2L011ICT2200 SS |
|  | 1253 | **RHD4-02-002-L011-(ICT)-Information and Communication Technologies Road Crossings** |  | 2026-09-13 | 2026-09-21 |  |
| RHD4CZ2L011ICT3100 |  | Excavation for Road Crossings for ICT Network - (RD-L-11)-Z2-L011-ICT | 2d | 2026-09-13 | 2026-09-14 | RHD4ENSDZ2APPICT200, RHD4CZ2L011ST2500 |
| RHD4CZ2L011ICT3200 |  | Installation of Road Crossings for ICT Network - (RD-L-11)-Z2-L011-ICT | 2d | 2026-09-15 | 2026-09-16 | RHD4PRSHLDOSICT1100, RHD4PRSHLSTAGICT1100, RHD4CZ2L011ICT3100 |
| RHD4CZ2L011ICT3300 |  | Pouring of Road Crossings for ICT Network - (RD-L-11)-Z2-L011-ICT | 2d | 2026-09-17 | 2026-09-19 | RHD4CZ2L011ICT3200 |
| RHD4CZ2L011ICT3400 |  | Backfilling of Road Crossings for ICT Network - (RD-L-11)-Z2-L011-ICT | 2d | 2026-09-20 | 2026-09-21 | RHD4CZ2L011ICT3300 |
|  | 1241 | **RHD4-02-002-Z2-L011-Landscape Network - LS** |  |  |  |  |
|  | 1242 | **RHD4-02-002-L011-(LS)-Landscape Lighting cables** |  |  |  |  |
|  | 1243 | **RHD4-02-002-L011-(LS)-Landscape Feeder Pillars** |  |  |  |  |
|  | 1244 | **RHD4-02-002-L011-(LS)-Landscape Bollard Poles** |  |  |  |  |
|  | 1245 | **RHD4-02-002-L011-(LS)-Landscape Feeder Pillars Earthing** |  |  |  |  |

| ID | WBS | Task | Duration | Start | Finish | Predecessors |
| --- | --- | --- | --- | --- | --- | --- |
|  | 1254 | **RHD4-02-002-Z2-L011-Security Network - CCTV** |  |  |  |  |
|  | 1255 | **RHD4-02-002-L011-(CCTV)-Civil Works** |  |  |  |  |
|  | 1256 | **RHD4-02-002-L011-(CCTV)-CCTV Poles** |  |  |  |  |
|  | 1257 | **RHD4-02-002-L011-(CCTV)-Camera** |  |  |  |  |
|  | 1258 | **RHD4-02-002-L011-(CCTV)-Power and Infrastructure** |  |  |  |  |
|  | 1260 | **RHD4-02-002-L011-(CCTV)-CCTV Panels and Components** |  |  |  |  |
|  | 704 | **RHD4-02-002-Z2-C082** |  | 2026-08-23 | 2027-09-11 |  |
|  | 567 | **RHD4-02-002-Z2-C082-Sewage Network - SW** |  | 2026-10-25 | 2026-11-11 |  |
|  | 577 | **RHD4-02-002-C082-(SW)-MH Works - 1200 mm diameter** |  | 2026-10-25 | 2026-11-04 |  |
| RHD4CZ2C082SW3100 |  | Excavation and PC Blinding works for MH 1200 mm - (RD-C-8 /2)-Z2-C082-SW | 2d | 2026-10-25 | 2026-10-26 | RHD4CZ2C082ST2300, RHD4CZ2C082ST2500 |
| RHD4CZ2C082SW3200 |  | Installation of Base for MH 1200 mm - (RD-C-8 /2)-Z2-C082-SW | 2d | 2026-10-27 | 2026-10-28 | RHD4CZ2C082SW3100 |
| RHD4CZ2C082SW3300 |  | MH Ring and C.Slab works and Backfilling works for MH 1200 mm - (RD-C-8 /2)-Z2-C082-SW | 2d | 2026-10-29 | 2026-10-31 | RHD4CZ2C082SW3200 |
| RHD4CZ2C082SW3400 |  | Steel Cover for MH 1200 mm - (RD-C-8 /2)-Z2-C082-SW | 2d | 2026-11-01 | 2026-11-02 | RHD4CZ2C082SW3300 |
| RHD4CZ2C082SW3500 |  | Finishing, Benching, Testing works for MH 1200 mm - (RD-C-8 /2)-Z2-C082-SW | 2d | 2026-11-03 | 2026-11-04 | RHD4CZ2C082SW3400, RHD4CZ2C082ST3502 |
|  | 573 | **RHD4-02-002-C082-(SW)-UPVC Pipes - 200 mm diameter** |  | 2026-11-01 | 2026-11-11 |  |
| RHD4CZ2C082SW2100 |  | Excavation works for UPVC Pipe Line 200 mm - (RD-C-8 /2)-Z2-C082-SW | 2d | 2026-11-01 | 2026-11-02 | RHD4CZ2C082SW3100, RHD4CZ2C082SW3100 FF, RHD4CZ2C082SW3300 |
| RHD4CZ2C082SW2200 |  | Bedding works for UPVC Pipe Line 200 mm - (RD-C-8 /2)-Z2-C082-SW | 2d | 2026-11-03 | 2026-11-04 | RHD4CZ2C082SW2100 |
| RHD4CZ2C082SW2300 |  | Installing for UPVC Pipe Line 200 mm - (RD-C-8 /2)-Z2-C082-SW | 2d | 2026-11-05 | 2026-11-07 | RHD4CZ2C082SW2200 |
| RHD4CZ2C082SW2400 |  | Primary Test for UPVC Pipe Line 200 mm - (RD-C-8 /2)-Z2-C082-SW | 2d | 2026-11-08 | 2026-11-09 | RHD4CZ2C082SW2300 |
| RHD4CZ2C082SW2500 |  | Backfilling and warning tape works for UPVC Pipe Line 200 mm - (RD-C-8 /2)-Z2-C082-SW | 2d | 2026-11-10 | 2026-11-11 | RHD4CZ2C082SW2400 |
|  | 779 | **RHD4-02-002-Z2-C082-Crossings Potable Network - PTCr** |  |  |  |  |
|  | 782 | **RHD4-02-002-C082-(PTCr)-HDPE Pipes - 200 mm diameter** |  |  |  |  |
|  | 785 | **RHD4-02-002-C082-(PTCr)-Gate Valves (Direct Buried)** |  |  |  |  |
|  | 788 | **RHD4-02-002-C082-(PTCr)-Wash out Valve Chambers** |  |  |  |  |
|  | 789 | **RHD4-02-002-C082-(PTCr)-Wash out Valves** |  |  |  |  |
|  | 792 | **RHD4-02-002-C082-(PTCr)-Fire Hydrant** |  |  |  |  |
|  | 826 | **RHD4-02-002-Z2-C082-Crossings Irrigation Network - IRRC** |  |  |  |  |
|  | 831 | **RHD4-02-002-C082-(IRRC)-HDPE Pipes - 315 mm diameter** |  |  |  |  |
|  | 827 | **RHD4-02-002-C082-(IRRC)-HDPE Pipes - 160 mm diameter** |  |  |  |  |
|  | 835 | **RHD4-02-002-C082-(IRRC)-Gate Valves (Direct Buried)** |  |  |  |  |
|  | 883 | **RHD4-02-002-Z2-C082-Road Works - RD** |  | 2026-09-08 | 2027-09-11 |  |
|  | 884 | **RHD4-02-002-C082-(RD)-Subgrade** |  | 2026-09-08 | 2026-09-17 |  |
| RHD4CZ2C082RD1100 |  | Supply, lay and compaction subgrade compacted thickness 300 mm for Roads - (RD-C-8 /2)-Z2-C082-RD | 9d | 2026-09-08 | 2026-09-17 | RHD4ENSDZ2APPEW100, RHD4ENSDZ2APPRD220, RHD4CZ2C082ST1506, RHD4CZ2C082ST3302, RHD4CZ2C082ST7300 |
|  | 885 | **RHD4-02-002-C082-(RD)-Aggregate Base Course** |  | 2026-09-19 | 2026-09-27 |  |
| RHD4CZ2C082RD2100 |  | Supply, lay and compaction Aggregate base course compacted thickness 300 mmfor Roads - (RD-C-8 /2)-Z2-C082-RD | 7d | 2026-09-19 | 2026-09-27 | RHD4PRSHLDOSRD1000, RHD4PRSHLSTAGRD1000, RHD4CZ2C082RD1100 |
|  | 886 | **RHD4-02-002-C082-(RD)-Bituminous base course Two Layers, including (MC1)&(RC2)** |  | 2026-09-28 | 2027-02-28 |  |
| RHD4CZ2C082RD3100 |  | Supply, lay and Asphaltic base course including Prime Coat (MC1) for 1st Layer - (RD-C-8 /2)-Z2-C082-RD | 3d | 2026-09-28 | 2026-09-30 | RHD4PRSHLDOSRD1100, RHD4ENMSASPH2000, RHD4ENMSASPH2010, RHD4PRSHLSTAGRD1100, RHD4CZ2C082RD2100 |
| RHD4CZ2C082RD3200 |  | Supply, lay and Asphaltic base course including Tack Coat (RC2) for 2nd Layer - (RD-C-8 /2)-Z2-C082-RD | 3d | 2027-02-25 | 2027-02-28 | RHD4PRSHLDOSRD1100, RHD4PRSHLSTAGRD1100, RHD4CZ2C082RD3100, RHD4CZ2C082CCTV6100 |
|  | 888 | **RHD4-02-002-C082-(RD)-Precast Concrete Curb** |  | 2027-03-01 | 2027-03-07 |  |
| RHD4CZ2C082RD5100 |  | Supply and installation Precast Concrete Kerb for Roads - (RD-C-8 /2)-Z2-C082-RD | 6d | 2027-03-01 | 2027-03-07 | RHD4PRSHLDOSRD1200, RHD4ENMSRD2000, RHD4ENMSRD2010, RHD4PRSHLSTAGRD1200, RHD4CZ2C082RD3200 |
|  | 891 | **RHD4-02-002-C082-(RD)-Traffic Signage** |  | 2027-03-08 | 2027-03-17 |  |
| RHD4CZ2C082RD8100 |  | Installation of Traffic Signage for Road Network - (RD-C-8 /2)-Z2-C082-RD | 6d | 2027-03-08 | 2027-03-17 | RHD4PRSHLDOSRD1600, RHD4PRSHLSTAGRD1600, RHD4CZ2C082RD5100, RHD4CZ2C082TC2400, RHD4CZ2C082ICT2400, RHD4CZ2C082TC5200, RHD4CZ2L011RD8100 |
|  | 889 | **RHD4-02-002-C082-(RD)-Precast Interlocking Block Pavers** |  |  |  |  |
|  | 887 | **RHD4-02-002-C082-(RD)-Bituminous concrete wearing course including tack coat (RC2)** |  | 2027-09-01 | 2027-09-02 |  |
| RHD4CZ2C082RD4100 |  | Supply, lay and compaction Asphaltic wearing course including tack Coat (RC2)for Road Network - (RD-C-8 /2)-Z2-C082-RD | 2d | 2027-09-01 | 2027-09-02 | RHD4CZ2C082RD5100, RHD4CZ2L102RD4100 |
|  | 890 | **RHD4-02-002-C082-(RD)-Pavement Marking** |  | 2027-09-04 | 2027-09-11 |  |
| RHD4CZ2C082RD7100 |  | Pavement Markings for Road Network - (RD-C-8 /2)-Z2-C082-RD | 7d | 2027-09-04 | 2027-09-11 | RHD4PRSHLDOSRD1500, RHD4PRSHLSTAGRD1500, RHD4CZ2C082RD4100 |
|  | 708 | **RHD4-02-002-Z2-C082-Storm Network - ST** |  | 2026-08-23 | 2026-11-04 |  |
|  | 6213 | **RHD4-02-002-C082-(ST)-MH Works - 2000 mm diameter** |  | 2026-09-01 | 2026-09-12 |  |
| RHD4CZ2C082ST3102 |  | Excavation and PC Blinding works for MH 2000 mm - (RD-C-8 /2)-Z2-C082-ST | 2d | 2026-09-01 | 2026-09-02 | RHD4CZ2C082ST3101 |
| RHD4CZ2C082ST3202 |  | Installation of Base for MH 2000 mm - (RD-C-8 /2)-Z2-C082-ST | 2d | 2026-09-03 | 2026-09-05 | RHD4CZ2C082ST3102 |
| RHD4CZ2C082ST3302 |  | MH Ring and C.Slab works and Backfilling works for MH 2000 mm - (RD-C-8 /2)-Z2-C082-ST | 2d | 2026-09-06 | 2026-09-07 | RHD4CZ2C082ST3202 |
| RHD4CZ2C082ST3402 |  | Steel Cover for MH 2000 mm - (RD-C-8 /2)-Z2-C082-ST | 2d | 2026-09-08 | 2026-09-09 | RHD4CZ2C082ST3302 |
| RHD4CZ2C082ST3502 |  | Finishing, Benching, Testing works for MH 2000 mm - (RD-C-8 /2)-Z2-C082-ST | 2d | 2026-09-10 | 2026-09-12 | RHD4CZ2C082ST3402 |
|  | 525 | **RHD4-02-002-C082-(ST)-GRP Pipes - 1000 mm diameter** |  | 2026-08-23 | 2026-09-02 |  |
| RHD4CZ2C082ST1106 |  | Excavation works for GRP Pipe Line 1000 mm - (RD-C-8 /2)-Z2-C082-ST | 2d | 2026-08-23 | 2026-08-24 | RHD4PRSHLDOSST1301 |
| RHD4CZ2C082ST1206 |  | Bedding works for GRP Pipe Line 1000 mm - (RD-C-8 /2)-Z2-C082-ST | 2d | 2026-08-25 | 2026-08-26 | RHD4CZ2C082ST1106 |
| RHD4CZ2C082ST1306 |  | Installing for GRP Pipe Line 1000 mm - (RD-C-8 /2)-Z2-C082-ST | 2d | 2026-08-27 | 2026-08-29 | RHD4CZ2C082ST1206 |
| RHD4CZ2C082ST1406 |  | Primary Test for GRP Pipe Line 1000 mm - (RD-C-8 /2)-Z2-C082-ST | 2d | 2026-08-30 | 2026-08-31 | RHD4CZ2C082ST1306 |
| RHD4CZ2C082ST1506 |  | Backfilling and warning tape works for GRP Pipe Line 1000 mm - (RD-C-8 /2)-Z2-C082-ST | 2d | 2026-09-01 | 2026-09-02 | RHD4CZ2C082ST1406 |
|  | 725 | **RHD4-02-002-C082-(ST)-MH Works - 1200 mm diameter** |  | 2026-08-25 | 2026-11-02 |  |
| RHD4CZ2C082ST3100 |  | Excavation and PC Blinding works for MH 1200 mm - (RD-C-8 /2)-Z2-C082-ST | 4d | 2026-08-25 | 2026-08-29 | RHD4ENSDZ2APPST110, RHD4ENMSST2000, RHD4ENMSST2010, RHD4CZ2C082ST1106 |
| RHD4CZ2C082ST3200 |  | Installation of Base for MH 1200 mm - (RD-C-8 /2)-Z2-C082-ST | 4d | 2026-08-30 | 2026-09-02 | RHD4PRSHLSTAGST1601, RHD4CZ2C082ST3100 |
| RHD4CZ2C082ST3300 |  | MH Ring and C.Slab works and Backfilling works for MH 1200 mm - (RD-C-8 /2)-Z2-C082-ST | 4d | 2026-09-03 | 2026-09-07 | RHD4PRSHLDOSST1601, RHD4CZ2C082ST3200 |
| RHD4CZ2C082ST3400 |  | Steel Cover for MH 1200 mm - (RD-C-8 /2)-Z2-C082-ST | 4d | 2026-10-25 | 2026-10-28 | RHD4PRSHLDOSST1701, RHD4PRSHLSTAGST1701, RHD4CZ2C082ST3300, RHD4CZ2C082ST2500, RHD4CZ2C082ST1500 |
| RHD4CZ2C082ST3500 |  | Finishing, Benching, Testing works for MH 1200 mm - (RD-C-8 /2)-Z2-C082-ST | 4d | 2026-10-29 | 2026-11-02 | RHD4CZ2C082ST3400 |
|  | 726 | **RHD4-02-002-C082-(ST)-MH Works - 1500 mm diameter** |  | 2026-08-30 | 2026-11-04 |  |
| RHD4CZ2C082ST3101 |  | Excavation and PC Blinding works for MH 1500 mm - (RD-C-8 /2)-Z2-C082-ST | 2d | 2026-08-30 | 2026-08-31 | RHD4ENSDZ2APPST110, RHD4ENMSST2000, RHD4CZ2C082ST3100 |
| RHD4CZ2C082ST3201 |  | Installation of Base for MH 1500 mm - (RD-C-8 /2)-Z2-C082-ST | 2d | 2026-09-03 | 2026-09-05 | RHD4PRSHLSTAGST1601, RHD4CZ2C082ST3101, RHD4CZ2C082ST3200 |
| RHD4CZ2C082ST3301 |  | MH Ring and C.Slab works and Backfilling works for MH 1500 mm - (RD-C-8 /2)-Z2-C082-ST | 2d | 2026-09-08 | 2026-09-09 | RHD4PRSHLDOSST1601, RHD4CZ2C082ST3201, RHD4CZ2C082ST3300 |

| ID | WBS | Task | Duration | Start | Finish | Predecessors |
| --- | --- | --- | --- | --- | --- | --- |
| RHD4CZ2C082ST3401 |  | Steel Cover for MH 1500 mm - (RD-C-8 /2)-Z2-C082-ST | 2d | 2026-10-29 | 2026-10-31 | RHD4PRSHLDOSST1701, RHD4PRSHLSTAGST1701, RHD4CZ2C082ST3301, RHD4CZ2C082ST1500, RHD4CZ2C082ST3400 |
| RHD4CZ2C082ST3501 |  | Finishing, Benching, Testing works for MH 1500 mm - (RD-C-8 /2)-Z2-C082-ST | 2d | 2026-11-03 | 2026-11-04 | RHD4CZ2C082ST3401, RHD4CZ2C082ST2500, RHD4CZ2C082ST3500 |
|  | 712 | **RHD4-02-002-C082-(ST)-GRP Pipes - 700 mm diameter** |  | 2026-08-25 | 2026-09-05 |  |
| RHD4CZ2C082ST1103 |  | Excavation works for GRP Pipe Line 700 mm - (RD-C-8 /2)-Z2-C082-ST | 2d | 2026-08-25 | 2026-08-26 | RHD4ENSDZ2APPST110, RHD4CZ2C082ST1106 |
| RHD4CZ2C082ST1203 |  | Bedding works for GRP Pipe Line 700 mm - (RD-C-8 /2)-Z2-C082-ST | 2d | 2026-08-27 | 2026-08-29 | RHD4CZ2C082ST1103 |
| RHD4CZ2C082ST1303 |  | Installing for GRP Pipe Line 700 mm - (RD-C-8 /2)-Z2-C082-ST | 2d | 2026-08-30 | 2026-08-31 | RHD4PRSHLSTAGST1001, RHD4CZ2C082ST1203, RHD4PRSHLPOST1000, RHD4PRSHLDOSST1001 |
| RHD4CZ2C082ST1403 |  | Primary Test for GRP Pipe Line 700 mm - (RD-C-8 /2)-Z2-C082-ST | 2d | 2026-09-01 | 2026-09-02 | RHD4CZ2C082ST1303 |
| RHD4CZ2C082ST1503 |  | Backfilling and warning tape works for GRP Pipe Line 700 mm - (RD-C-8 /2)-Z2-C082-ST | 2d | 2026-09-03 | 2026-09-05 | RHD4CZ2C082ST1403 |
|  | 711 | **RHD4-02-002-C082-(ST)-GRP Pipes - 600 mm diameter** |  | 2026-09-06 | 2026-09-16 |  |
| RHD4CZ2C082ST1102 |  | Excavation works for GRP Pipe Line 600 mm - (RD-C-8 /2)-Z2-C082-ST | 2d | 2026-09-06 | 2026-09-07 | RHD4ENSDZ2APPST110, RHD4CZ2C082ST1103, RHD4CZ2C082ST1503 |
| RHD4CZ2C082ST1202 |  | Bedding works for GRP Pipe Line 600 mm - (RD-C-8 /2)-Z2-C082-ST | 2d | 2026-09-08 | 2026-09-09 | RHD4CZ2C082ST1102 |
| RHD4CZ2C082ST1302 |  | Installing for GRP Pipe Line 600 mm - (RD-C-8 /2)-Z2-C082-ST | 2d | 2026-09-10 | 2026-09-12 | RHD4PRSHLSTAGST1001, RHD4CZ2C082ST1202, RHD4CZ2C082ST1303, RHD4PRSHLPOST1000, RHD4PRSHLDOSST1001 |
| RHD4CZ2C082ST1402 |  | Primary Test for GRP Pipe Line 600 mm - (RD-C-8 /2)-Z2-C082-ST | 2d | 2026-09-13 | 2026-09-14 | RHD4CZ2C082ST1302 |
| RHD4CZ2C082ST1502 |  | Backfilling and warning tape works for GRP Pipe Line 600 mm - (RD-C-8 /2)-Z2-C082-ST | 2d | 2026-09-15 | 2026-09-16 | RHD4CZ2C082ST1402, RHD4CZ2C082ST1503 |
|  | 710 | **RHD4-02-002-C082-(ST)-GRP Pipes - 500 mm diameter** |  | 2026-09-17 | 2026-09-29 |  |
| RHD4CZ2C082ST1101 |  | Excavation works for GRP Pipe Line 500 mm - (RD-C-8 /2)-Z2-C082-ST | 2d | 2026-09-17 | 2026-09-19 | RHD4ENSDZ2APPST110, RHD4CZ2C082ST1102, RHD4CZ2C082ST1502 |
| RHD4CZ2C082ST1201 |  | Bedding works for GRP Pipe Line 500 mm - (RD-C-8 /2)-Z2-C082-ST | 2d | 2026-09-20 | 2026-09-21 | RHD4CZ2C082ST1101, RHD4CZ2C082ST1202 |
| RHD4CZ2C082ST1301 |  | Installing for GRP Pipe Line 500 mm - (RD-C-8 /2)-Z2-C082-ST | 2d | 2026-09-22 | 2026-09-24 | RHD4PRSHLSTAGST1001, RHD4CZ2C082ST1201, RHD4CZ2C082ST1302, RHD4PRSHLPOST1000, RHD4PRSHLDOSST1001 |
| RHD4CZ2C082ST1401 |  | Primary Test for GRP Pipe Line 500 mm - (RD-C-8 /2)-Z2-C082-ST | 2d | 2026-09-26 | 2026-09-27 | RHD4CZ2C082ST1301 |
| RHD4CZ2C082ST1501 |  | Backfilling and warning tape works for GRP Pipe Line 500 mm - (RD-C-8 /2)-Z2-C082-ST | 2d | 2026-09-28 | 2026-09-29 | RHD4CZ2C082ST1401, RHD4CZ2C082ST1502 |
|  | 709 | **RHD4-02-002-C082-(ST)-GRP Pipes - 400 mm diameter** |  | 2026-09-30 | 2026-10-11 |  |
| RHD4CZ2C082ST1100 |  | Excavation works for GRP Pipe Line 400 mm - (RD-C-8 /2)-Z2-C082-ST | 2d | 2026-09-30 | 2026-10-01 | RHD4ENSDZ2APPST110, RHD4CZ2C082ST1101, RHD4CZ2C082ST1501 |
| RHD4CZ2C082ST1200 |  | Bedding works for GRP Pipe Line 400 mm - (RD-C-8 /2)-Z2-C082-ST | 2d | 2026-10-03 | 2026-10-04 | RHD4CZ2C082ST1100, RHD4CZ2C082ST1201 |
| RHD4CZ2C082ST1300 |  | Installing for GRP Pipe Line 400 mm - (RD-C-8 /2)-Z2-C082-ST | 2d | 2026-10-05 | 2026-10-06 | RHD4PRSHLSTAGST1001, RHD4CZ2C082ST1200, RHD4CZ2C082ST1301, RHD4PRSHLPOST1000, RHD4PRSHLDOSST1001 |
| RHD4CZ2C082ST1400 |  | Primary Test for GRP Pipe Line 400 mm - (RD-C-8 /2)-Z2-C082-ST | 2d | 2026-10-07 | 2026-10-08 | RHD4CZ2C082ST1300 |
| RHD4CZ2C082ST1500 |  | Backfilling and warning tape works for GRP Pipe Line 400 mm - (RD-C-8 /2)-Z2-C082-ST | 2d | 2026-10-10 | 2026-10-11 | RHD4PRSHLSTAGMV1000, RHD4CZ2C082ST1400, RHD4CZ2C082ST1501 |
|  | 724 | **RHD4-02-002-C082-(ST)-UPVC Pipes - 400 mm diameter** |  |  |  |  |
|  | 723 | **RHD4-02-002-C082-(ST)-UPVC Pipes - 300 mm diameter** |  | 2026-10-12 | 2026-10-24 |  |
| RHD4CZ2C082ST2100 |  | Excavation works for UPVC Pipe Line 300 mm - (RD-C-8 /2)-Z2-C082-ST | 2d | 2026-10-12 | 2026-10-13 | RHD4ENSDZ2APPST110, RHD4CZ2C082ST1100, RHD4CZ2C082ST1500 |
| RHD4CZ2C082ST2200 |  | Bedding works for UPVC Pipe Line 300 mm - (RD-C-8 /2)-Z2-C082-ST | 2d | 2026-10-14 | 2026-10-15 | RHD4CZ2C082ST2100 |
| RHD4CZ2C082ST2300 |  | Installing for UPVC Pipe Line 300 mm - (RD-C-8 /2)-Z2-C082-ST | 2d | 2026-10-17 | 2026-10-18 | RHD4PRSHLDOSST1101, RHD4PRSHLSTAGST1101, RHD4CZ2C082ST2200 |
| RHD4CZ2C082ST2400 |  | Primary Test for UPVC Pipe Line 300 mm - (RD-C-8 /2)-Z2-C082-ST | 2d | 2026-10-19 | 2026-10-20 | RHD4CZ2C082ST2300 |
| RHD4CZ2C082ST2500 |  | Backfilling and warning tape works for UPVC Pipe Line 300 mm - (RD-C-8 /2)-Z2-C082-ST | 3d | 2026-10-21 | 2026-10-24 | RHD4CZ2C082ST2400, RHD4CZ2C082ST6100 |
|  | 731 | **RHD4-02-002-C082-(ST)-Concrete Encasement** |  | 2026-10-17 | 2026-10-18 |  |
| RHD4CZ2C082ST6100 |  | Pipe Encasement for Storm Pipelines - (RD-C-8 /2)-Z2-C082-ST | 2d | 2026-10-17 | 2026-10-18 | RHD4CZ2C082ST2300 SS, RHD4CZ2C082ST2300 FF, RHD4CZ2C082ST2200, RHD4CZ2C082RD3100 |
|  | 732 | **RHD4-02-002-Z2-C082-Catch Basin - ST** |  | 2026-08-25 | 2026-09-21 |  |
|  | 733 | **RHD4-02-002-C082-(ST)-Single Catch Basin Works** |  | 2026-08-25 | 2026-09-13 |  |
| RHD4CZ2C082ST7100 |  | Excavation works for Single Catch Basin - (RD-C-8 /2)-Z2-C082-ST | 3d | 2026-08-25 | 2026-08-27 | RHD4ENSDZ2APPST110, RHD4CZ2C082ST1106 |
| RHD4CZ2C082ST7200 |  | PC Blinding, Installation and Pipe connection for Single Catch Basin - (RD-C-8 /2)-Z2-C082-ST | 3d | 2026-08-29 | 2026-08-31 | RHD4CZ2C082ST7100 |
| RHD4CZ2C082ST7300 |  | Rings & C.Slab & Final Backfill for Single Catch Basin - (RD-C-8 /2)-Z2-C082-ST | 3d | 2026-09-01 | 2026-09-03 | RHD4PRSHLDOSST1301, RHD4PRSHLSTAGST1301, RHD4CZ2C082ST7200 |
| RHD4CZ2C082ST7400 |  | Steel Cover for Single Catch Basin - (RD-C-8 /2)-Z2-C082-ST | 3d | 2026-09-05 | 2026-09-07 | RHD4PRSHLDOSST1701, RHD4CZ2C082ST7300 |
| RHD4CZ2C082ST7500 |  | Finishing and Insulation works for Single Catch Basin - (RD-C-8 /2)-Z2-C082-ST | 5d | 2026-09-08 | 2026-09-13 | RHD4CZ2C082ST7400 |
|  | 734 | **RHD4-02-002-C082-(ST)-Double Catch Basin Works** |  | 2026-09-10 | 2026-09-21 |  |
| RHD4CZ2C082ST8100 |  | Excavation works for Double Catch Basin - (RD-C-8 /2)-Z2-C082-ST | 2d | 2026-09-10 | 2026-09-12 | RHD4ENSDZ2APPST110, RHD4CZ2C082ST3300, RHD4CZ2C082ST3301, RHD4CZ2C082ST7100 |
| RHD4CZ2C082ST8200 |  | PC Blinding, Installation and Pipe connection for Double Catch Basin - (RD-C-8 /2)-Z2-C082-ST | 2d | 2026-09-13 | 2026-09-14 | RHD4CZ2C082ST8100, RHD4CZ2C082ST7200 |
| RHD4CZ2C082ST8300 |  | Rings & C.Slab & Final Backfillfor Double Catch Basin - (RD-C-8 /2)-Z2-C082-ST | 2d | 2026-09-15 | 2026-09-16 | RHD4PRSHLDOSST1301, RHD4PRSHLSTAGST1301, RHD4CZ2C082ST8200, RHD4CZ2C082ST7300 |
| RHD4CZ2C082ST8400 |  | Steel Cover for Double Catch Basin - (RD-C-8 /2)-Z2-C082-ST | 2d | 2026-09-17 | 2026-09-19 | RHD4PRSHLDOSST1701, RHD4CZ2C082ST8300, RHD4CZ2C082ST7400 |
| RHD4CZ2C082ST8500 |  | Finishing and Insulation works for Double Catch Basin - (RD-C-8 /2)-Z2-C082-ST | 2d | 2026-09-20 | 2026-09-21 | RHD4CZ2C082ST8400, RHD4CZ2C082ST7500 |
|  | 705 | **RHD4-02-002-Z2-C082-Concrete Box Culvert - ST** |  | 2027-03-01 | 2027-07-10 |  |
|  | 706 | **RHD4-02-002-C082-(ST)-Concrete Box Culvert** |  | 2027-03-01 | 2027-07-10 |  |
| RHD4CZ2C082ST4100 |  | Excavation works for Box Culvert - (RD-C-8 /2)-Z2-C082-ST | 21d | 2027-03-01 | 2027-03-28 | RHD4ENSDZ2APPST110, RHD4ENMSBC2010, RHD4CZ1CH1ST1200 |
| RHD4CZ2C082ST4200 |  | PC works for Box Culvert - (RD-C-8 /2)-Z2-C082-ST | 7d | 2027-03-29 | 2027-04-05 | RHD4CZ2C082ST4100 |
| RHD4CZ2C082ST4400 |  | Raft works for Box Culvert - (RD-C-8 /2)-Z2-C082-ST | 19d | 2027-04-06 | 2027-04-27 | RHD4PRSHLDOSST1501, RHD4PRSHLSTAGST1501, RHD4CZ2C082ST4200 |
| RHD4CZ2C082ST4500 |  | Wall and slab works for Box Culvert - (RD-C-8 /2)-Z2-C082-ST | 19d | 2027-04-28 | 2027-05-24 | RHD4PRSHLDOSST1501, RHD4PRSHLSTAGST1501, RHD4CZ2C082ST4400 |
| RHD4CZ2C082ST4700 |  | Backfilling works for Box Culvert - (RD-C-8 /2)-Z2-C082-ST | 17d | 2027-06-02 | 2027-06-21 | RHD4CZ2C082ST4500, RHD4CZ2C082ST5300 |
| RHD4CZ2C082ST4600 |  | Insulation and Testing for Box Culvert - (RD-C-8 /2)-Z2-C082-ST | 16d | 2027-06-22 | 2027-07-10 | RHD4CZ2C082ST5400, RHD4CZ2C082ST4700 |
|  | 707 | **RHD4-02-002-C082-(ST)-Concrete Chambers** |  | 2027-05-25 | 2027-06-03 |  |
| RHD4CZ2C082ST5100 |  | Excavation and Bedding for Concrete Chambers - for Box Culvert - (RD-C-8 /2)-Z2-C082-ST | 3d | 2027-05-25 | 2027-05-27 | RHD4ENSDZ2APPST110, RHD4CZ2C082ST4500 |
| RHD4CZ2C082ST5200 |  | PC works for Concrete Chambers - for Box Culvert - (RD-C-8 /2)-Z2-C082-ST | 2d | 2027-05-29 | 2027-05-30 | RHD4CZ2C082ST5100 |
| RHD4CZ2C082ST5300 |  | Installation for Concrete Chambers - for Box Culvert - (RD-C-8 /2)-Z2-C082-ST | 2d | 2027-05-31 | 2027-06-01 | RHD4CZ2C082ST5200 |
| RHD4CZ2C082ST5400 |  | Backfilling works for Concrete Chambers - for Box Culvert - (RD-C-8 /2)-Z2-C082-ST | 2d | 2027-06-02 | 2027-06-03 | RHD4CZ2C082ST5300 |
|  | 794 | **RHD4-02-002-Z2-C082-Potable Network - PT** |  | 2026-11-12 | 2026-12-26 |  |
|  | 797 | **RHD4-02-002-C082-(PT)-HDPE Pipes - 200 mm diameter** |  | 2026-11-12 | 2026-12-21 |  |
| RHD4CZ2C082PT1102 |  | Excavation works for HDPE Pipline 200 mm - (RD-C-8 /2)-Z2-C082-PT | 5d | 2026-11-12 | 2026-11-17 | RHD4ENSDZ2APPPT130, RHD4ENMSPT2000, RHD4CZ2C082ST2500, RHD4CZ2C082SW2500 |
| RHD4CZ2C082PT1202 |  | Bedding works for HDPE Pipline 200 mm - (RD-C-8 /2)-Z2-C082-PT | 4d | 2026-11-18 | 2026-11-22 | RHD4CZ2C082PT1102 |
| RHD4CZ2C082PT1302 |  | Installing for HDPE Pipline 200 mm - (RD-C-8 /2)-Z2-C082-PT | 7d | 2026-11-23 | 2026-11-30 | RHD4PRSHLDOSPT1000, RHD4PRSHLSTAGPT1000, RHD4CZ2C082PT1202 |
| RHD4CZ2C082PT1402 |  | Primary Test for HDPE Pipline 200 mm - (RD-C-8 /2)-Z2-C082-PT | 3d | 2026-12-12 | 2026-12-14 | RHD4CZ2C082PT1302, RHD4CZ2C082PT5100, RHD4CZ2C082PT3100 |
| RHD4CZ2C082PT1502 |  | Backfilling and warning tape works for HDPE Pipline 200 mm - (RD-C-8 /2)-Z2-C082-PT | 6d | 2026-12-15 | 2026-12-21 | RHD4CZ2C082PT1402, RHD4CZ2C082PT5100 |
|  | 800 | **RHD4-02-002-C082-(PT)-Gate Valves (Direct Buried)** |  | 2026-11-29 | 2026-12-23 |  |
| RHD4CZ2C082PT3100 |  | Installation for Direct Buried Gate Valves - (RD-C-8 /2)-Z2-C082-PT | 2d | 2026-11-29 | 2026-11-30 | RHD4PRSHLDOSPT1200, RHD4PRSHLSTAGPT1200, RHD4CZ2C082PT1302 FF, RHD4CZ2C082PT1302 SS |

| ID | WBS | Task | Duration | Start | Finish | Predecessors |
| --- | --- | --- | --- | --- | --- | --- |
| RHD4CZ2C082PT3200 |  | Stem and Service box for Direct Buried Gate Valves - (RD-C-8 /2)-Z2-C082-PT | 2d | 2026-12-22 | 2026-12-23 | RHD4PRSHLDOSPT1300, RHD4PRSHLSTAGPT1300, RHD4CZ2C082PT3100, RHD4CZ2C082PT1502, RHD4CZ2C082PT1302, RHD4CZ2C082PT1402 |
|  | 808 | **RHD4-02-002-C082-(PT)-Concrete Encasement** |  | 2026-11-23 | 2026-12-10 |  |
| RHD4CZ2C082PT5100 |  | Pipe Encasement for Potable Pipelines - (RD-C-8 /2)-Z2-C082-PT | 16d | 2026-11-23 | 2026-12-10 | RHD4CZ2C082PT1302 FF, RHD4CZ2C082PT1302 SS, RHD4CZ2C082PT1202 |
|  | 803 | **RHD4-02-002-C082-(PT)-Wash out Valve Chambers** |  | 2026-11-18 | 2026-12-26 |  |
| RHD4CZ2C082PT2101 |  | Excavation and Bedding for Wash out Valve Chambers for Potable Water Network - (RD-C-8 /2)-Z2-C082-PT | 2d | 2026-11-18 | 2026-11-19 | RHD4ENSDZ2APPPT130, RHD4CZ2C082PT1102 |
| RHD4CZ2C082PT2201 |  | PC works for Wash out Valve Chambers for Potable Water Network - (RD-C-8 /2)-Z2-C082-PT | 2d | 2026-11-21 | 2026-11-22 | RHD4CZ2C082PT2101 |
| RHD4CZ2C082PT2301 |  | Installation for Wash out Valve Chambers for Potable Water Network - (RD-C-8 /2)-Z2-C082-PT | 2d | 2026-11-23 | 2026-11-24 | RHD4PRSHLDOSPT1100, RHD4PRSHLDOSPT1400, RHD4PRSHLSTAGPT1100, RHD4PRSHLSTAGPT1400, RHD4CZ2C082PT2201 |
| RHD4CZ2C082PT2401 |  | Backfilling works for Wash out Valve Chambers for Potable Water Network - (RD-C-8 /2)-Z2-C082-PT | 2d | 2026-12-24 | 2026-12-26 | RHD4CZ2C082PT2301, RHD4CZ2C082PT3200 |
|  | 804 | **RHD4-02-002-C082-(PT)-Wash out Valves** |  | 2026-12-01 | 2026-12-05 |  |
| RHD4CZ2C082PT3102 |  | Installation for Wash out Valves for Potable Water Network - (RD-C-8 /2)-Z2-C082-PT | 2d | 2026-12-01 | 2026-12-02 | RHD4PRSHLDOSPT1200, RHD4PRSHLSTAGPT1200, RHD4CZ2C082PT1302 |
| RHD4CZ2C082PT3202 |  | Stem and Service box for Wash out Valves for Potable Water Network - (RD-C-8 /2)-Z2-C082-PT | 2d | 2026-12-03 | 2026-12-05 | RHD4PRSHLDOSPT1300, RHD4PRSHLSTAGPT1300, RHD4CZ2C082PT3102 |
|  | 805 | **RHD4-02-002-C082-(PT)-Air Valve Chambers** |  | 2026-11-18 | 2026-11-26 |  |
| RHD4CZ2C082PT2102 |  | Excavation and Bedding for Air Valve Chambers for Potable Water Network - (RD-C-8 /2)-Z2-C082-PT | 2d | 2026-11-18 | 2026-11-19 | RHD4ENSDZ2APPPT130, RHD4CZ2C082PT1102 |
| RHD4CZ2C082PT2202 |  | PC works for Air Valve Chambers for Potable Water Network - (RD-C-8 /2)-Z2-C082-PT | 2d | 2026-11-21 | 2026-11-22 | RHD4CZ2C082PT2102 |
| RHD4CZ2C082PT2302 |  | Installation for Air Valve Chambers for Potable Water Network - (RD-C-8 /2)-Z2-C082-PT | 2d | 2026-11-23 | 2026-11-24 | RHD4PRSHLDOSPT1100, RHD4PRSHLDOSPT1400, RHD4PRSHLSTAGPT1100, RHD4PRSHLSTAGPT1400, RHD4CZ2C082PT2202 |
| RHD4CZ2C082PT2402 |  | Backfilling works for Air Valve Chambers for Potable Water Network - (RD-C-8 /2)-Z2-C082-PT | 2d | 2026-11-25 | 2026-11-26 | RHD4CZ2C082PT2302 |
|  | 806 | **RHD4-02-002-C082-(PT)-Air Valves** |  | 2026-11-25 | 2026-11-29 |  |
| RHD4CZ2C082PT3103 |  | Installation for Air Valves for Potable Water Network - (RD-C-8 /2)-Z2-C082-PT | 2d | 2026-11-25 | 2026-11-26 | RHD4PRSHLDOSPT1200, RHD4PRSHLSTAGPT1200, RHD4CZ2C082PT2302 |
| RHD4CZ2C082PT3203 |  | Stem and Service box for Air Valves for Potable Water Network - (RD-C-8 /2)-Z2-C082-PT | 2d | 2026-11-28 | 2026-11-29 | RHD4PRSHLDOSPT1300, RHD4PRSHLSTAGPT1300, RHD4CZ2C082PT3103, RHD4CZ2C082PT2402 |
|  | 807 | **RHD4-02-002-C082-(PT)-Fire Hydrant** |  | 2026-12-01 | 2026-12-17 |  |
| RHD4CZ2C082PT4100 |  | Excavation and Bedding and Pipe Installation for Fire Hydrant - (RD-C-8 /2)-Z2-C082-PT | 4d | 2026-12-01 | 2026-12-05 | RHD4ENSDZ2APPPT130, RHD4CZ2C082PT1302 |
| RHD4CZ2C082PT4200 |  | Valve Installation for Fire Hydrant - (RD-C-8 /2)-Z2-C082-PT | 3d | 2026-12-06 | 2026-12-08 | RHD4CZ2C082PT4100 |
| RHD4CZ2C082PT4300 |  | Stem for Fire Hydrant - (RD-C-8 /2)-Z2-C082-PT | 3d | 2026-12-09 | 2026-12-12 | RHD4CZ2C082PT4200 |
| RHD4CZ2C082PT4400 |  | Fire Installation for Fire Hydrant - (RD-C-8 /2)-Z2-C082-PT | 3d | 2026-12-13 | 2026-12-15 | RHD4PRSHLDOSPT1500, RHD4PRSHLSTAGPT1500, RHD4CZ2C082PT4300 |
| RHD4CZ2C082PT4500 |  | Protection Barriers for Fire Hydrant - (RD-C-8 /2)-Z2-C082-PT | 2d | 2026-12-16 | 2026-12-17 | RHD4CZ2C082PT4400 |
|  | 809 | **RHD4-02-002-Z2-C082-Irrigation Network - IRR** |  | 2026-11-18 | 2026-12-23 |  |
|  | 816 | **RHD4-02-002-C082-(IRR)-HDPE Pipes - 450 mm diameter** |  |  |  |  |
|  | 815 | **RHD4-02-002-C082-(IRR)-HDPE Pipes - 400 mm diameter** |  |  |  |  |
|  | 814 | **RHD4-02-002-C082-(IRR)-HDPE Pipes - 315 mm diameter** |  | 2026-11-18 | 2026-12-23 |  |
| RHD4CZ2C082IRR1104 |  | Excavation works for HDPE Pipline 315 mm - (RD-C-8 /2)-Z2-C082-IRR | 8d | 2026-11-18 | 2026-11-26 | RHD4ENSDZ2APPIRR140, RHD4ENMSRR2000, RHD4CZ2C082PT1102 |
| RHD4CZ2C082IRR1204 |  | Bedding works for HDPE Pipline 315 mm - (RD-C-8 /2)-Z2-C082-IRR | 6d | 2026-11-28 | 2026-12-03 | RHD4CZ2C082IRR1104 |
| RHD4CZ2C082IRR1304 |  | Installing for HDPE Pipline 315 mm - (RD-C-8 /2)-Z2-C082-IRR | 8d | 2026-12-05 | 2026-12-13 | RHD4PRSHLDOSIRR1000, RHD4PRSHLSTAGIRR1000, RHD4CZ2C082IRR1204 |
| RHD4CZ2C082IRR1404 |  | Primary Test for HDPE Pipline 315 mm - (RD-C-8 /2)-Z2-C082-IRR | 3d | 2026-12-14 | 2026-12-16 | RHD4CZ2C082IRR1304, RHD4CZ2C082IRR3100 |
| RHD4CZ2C082IRR1504 |  | Backfilling and warning tape works for HDPE Pipline 315 mm - (RD-C-8 /2)-Z2-C082-IRR | 6d | 2026-12-17 | 2026-12-23 | RHD4CZ2C082IRR1404 |
|  | 812 | **RHD4-02-002-C082-(IRR)-HDPE Pipes - 200 mm diameter** |  |  |  |  |
|  | 6863 | **RHD4-02-002-C082-(IRR)-HDPE Pipes - 160 mm diameter** |  | 2026-11-28 | 2026-12-08 |  |
| RHD4CZ2C082IRR1100 |  | Excavation works for HDPE Pipline 160 mm - (RD-C-8 /2)-Z2-C082-IRR | 2d | 2026-11-28 | 2026-11-29 | RHD4CZ2C082IRR1104 SS, RHD4CZ2C082IRR1104 |
| RHD4CZ2C082IRR1200 |  | Bedding works for HDPE Pipline 160 mm - (RD-C-8 /2)-Z2-C082-IRR | 2d | 2026-11-30 | 2026-12-01 | RHD4CZ2C082IRR1100 |
| RHD4CZ2C082IRR1300 |  | Installing for HDPE Pipline 160 mm - (RD-C-8 /2)-Z2-C082-IRR | 2d | 2026-12-02 | 2026-12-03 | RHD4CZ2C082IRR1200 |
| RHD4CZ2C082IRR1400 |  | Primary Test for HDPE Pipline 160 mm - (RD-C-8 /2)-Z2-C082-IRR | 2d | 2026-12-05 | 2026-12-06 | RHD4CZ2C082IRR1300 |
| RHD4CZ2C082IRR1500 |  | Backfilling and warning tape works for HDPE Pipline 160 mm - (RD-C-8 /2)-Z2-C082-IRR | 2d | 2026-12-07 | 2026-12-08 | RHD4CZ2C082IRR1400 |
|  | 818 | **RHD4-02-002-C082-(IRR)-Gate Valves (Direct Buried)** |  | 2026-12-05 | 2026-12-08 |  |
| RHD4CZ2C082IRR3100 |  | Installation for Direct Buried Gate Valves - (RD-C-8 /2)-Z2-C082-IRR | 2d | 2026-12-05 | 2026-12-06 | RHD4PRSHLDOSIRR1100, RHD4PRSHLSTAGIRR1100, RHD4CZ2C082IRR1304 SS |
| RHD4CZ2C082IRR3200 |  | Stem and Service box for Direct Buried Gate Valves - (RD-C-8 /2)-Z2-C082-IRR | 2d | 2026-12-07 | 2026-12-08 | RHD4PRSHLDOSIRR1300, RHD4PRSHLSTAGIRR1300, RHD4CZ2C082IRR3100 |
|  | 5383 | **RHD4-02-002-Z2-C082-Medium Voltage Network - MV** |  |  |  |  |
|  | 5384 | **RHD4-02-002-C082-(MV)-Medium Voltage cable trench** |  |  |  |  |
|  | 5386 | **RHD4-02-002-C082-(MV)-Medium Voltage cables 3Cx 500 mm²** |  |  |  |  |
|  | 856 | **RHD4-02-002-Z2-C082-Street Lighting Network - SL** |  | 2026-12-24 | 2027-02-17 |  |
|  | 857 | **RHD4-02-002-C082-(SL)-Street Lighting duct banks** |  | 2026-12-24 | 2027-01-09 |  |
| RHD4CZ2C082SL2100 |  | Excavation of Duct Banks for Street Lighting Network - (RD-C-8 /2)-Z2-C082-SL | 3d | 2026-12-24 | 2026-12-27 | RHD4ENSDZ2APPSL170, RHD4CZ2C082ST1106, RHD4CZ2C082IRR1504 |
| RHD4CZ2C082SL2200 |  | Installation of Duct Banks for Street Lighting Network - (RD-C-8 /2)-Z2-C082-SL | 5d | 2026-12-28 | 2027-01-02 | RHD4PRSHLDOSSL1000, RHD4PRSHLSTAGSL1000, RHD4CZ2C082SL2100 |
| RHD4CZ2C082SL2300 |  | Pouring of Duct Banks for Street Lighting Network - (RD-C-8 /2)-Z2-C082-SL | 3d | 2027-01-03 | 2027-01-05 | RHD4CZ2C082SL2200 |
| RHD4CZ2C082SL2400 |  | Backfilling of Duct Banks for Street Lighting Network - (RD-C-8 /2)-Z2-C082-SL | 3d | 2027-01-06 | 2027-01-09 | RHD4CZ2C082SL2300 |
|  | 858 | **RHD4-02-002-C082-(SL)-Street Lighting Drawpit** |  | 2027-01-13 | 2027-01-17 |  |
| RHD4CZ2C082SL5100 |  | Excavation of Drawpit size 600x600x900mm for Street Lighting Network - (RD-C-8 /2)-Z2-C082-SL | 2d | 2027-01-13 | 2027-01-14 | RHD4ENSDZ2APPSL170, RHD4CZ2C082SL2300, RHD4CZ2C082SL1100 |
| RHD4CZ2C082SL5200 |  | Installation of Drawpit size 600x600x900mm for Street Lighting Network - (RD-C-8 /2)-Z2-C082-SL | 2d | 2027-01-16 | 2027-01-17 | RHD4PRSHLDOSSL1400, RHD4PRSHLSTAGSL1400, RHD4CZ2C082SL5100, RHD4CZ2C082SW3500 |
|  | 860 | **RHD4-02-002-C082-(SL)-Street Lighting Poles** |  | 2027-01-10 | 2027-02-17 |  |
| RHD4CZ2C082SL1100 |  | Excavation for RC Base for Lighting Poles for Street Lighting Network - (RD-C-8 /2)-Z2-C082-SL | 3d | 2027-01-10 | 2027-01-12 | RHD4ENSDZ2APPSL170, RHD4CZ2C082SL2400, RHD4CZ2C082PT1502, RHD4CZ2C082IRR1504, RHD4CZ2C082IRR1404, RHD4CZ2C082RD3100 |
| RHD4CZ2C082SL1200 |  | Installation for RC Base for Lighting Poles for Street Lighting Network - (RD-C-8 /2)-Z2-C082-SL | 3d | 2027-01-13 | 2027-01-16 | RHD4CZ2C082SL1100 |
| RHD4CZ2C082SL1300 |  | Backfill for RC Base for Lighting Poles for Street Lighting Network - (RD-C-8 /2)-Z2-C082-SL | 3d | 2027-01-17 | 2027-01-19 | RHD4CZ2C082SL1200 |
| RHD4CZ2C082SL1400 |  | Installation for Lighting Poles for Street Lighting Network - (RD-C-8 /2)-Z2-C082-SL | 4d | 2027-02-08 | 2027-02-11 | RHD4PRSHLDOSSL1200, RHD4ENMSSL2000, RHD4ENMSSL2010, RHD4PRSHLSTAGSL1200, RHD4CZ2C082SL1300, RHD4CZ2C082SL3400 |
| RHD4CZ2C082SL1500 |  | Luminaire Installation for Lighting Poles for Street Lighting Network - (RD-C-8 /2)-Z2-C082-SL | 5d | 2027-02-13 | 2027-02-17 | RHD4PRSHLDOSSL1300, RHD4PRSHLSTAGSL1300, RHD4CZ2C082SL1400 |
|  | 859 | **RHD4-02-002-C082-(SL)-Street Lighting cables** |  | 2027-01-20 | 2027-02-07 |  |
| RHD4CZ2C082SL3100 |  | Excavation for Street Lighting Cables for Street Lighting Network - (RD-C-8 /2)-Z2-C082-SL | 5d | 2027-01-20 | 2027-01-25 | RHD4ENSDZ2APPSL170, RHD4CZ2C082SL1300 |
| RHD4CZ2C082SL3200 |  | Cable Laying of Street Lighting Cables for Street Lighting Network - (RD-C-8 /2)-Z2-C082-SL | 4d | 2027-01-26 | 2027-01-30 | RHD4PRSHLDOSSL1100, RHD4ENMSSL2000, RHD4ENMSSL2010, RHD4PRSHLSTAGSL1100, RHD4CZ2C082SL3100 |
| RHD4CZ2C082SL3300 |  | Warning tape and Backfill for Street Lighting Cables for Street Lighting Network - (RD-C-8 /2)-Z2-C082-SL | 4d | 2027-01-31 | 2027-02-03 | RHD4CZ2C082SL3200 |
| RHD4CZ2C082SL3400 |  | Testing of Street Lighting Cables for Street Lighting Network - (RD-C-8 /2)-Z2-C082-SL | 3d | 2027-02-04 | 2027-02-07 | RHD4CZ2C082SL3300 |
|  | 862 | **RHD4-02-002-C082-(SL)-Street Lighting Earthing System** |  | 2027-02-13 | 2027-02-14 |  |
| RHD4CZ2C082SL6100 |  | Installation of Earthing for Lighting Poles and Fedder Pillers for Street Lighting Network - (RD-C-8 /2)-Z2-C082-SL | 2d | 2027-02-13 | 2027-02-14 | RHD4ENMSER2000, RHD4ENMSER2010, RHD4CZ2C082SL1400, RHD4CZ2C082SL3300 |
|  | 868 | **RHD4-02-002-Z2-C082-Telecommunications Network - TC** |  | 2026-12-09 | 2027-02-18 |  |

| ID | WBS | Task | Duration | Start | Finish | Predecessors |
| --- | --- | --- | --- | --- | --- | --- |
|  | 869 | **RHD4-02-002-C082-(TC)-Telecommunications Ducts** |  | 2026-12-09 | 2027-01-09 |  |
| RHD4CZ2C082TC2100 |  | Excavation of HDPE Ducts for Telecom Network - (RD-C-8 /2)-Z2-C082-TC | 8d | 2026-12-09 | 2026-12-17 | RHD4ENSDZ2APPTC190, RHD4CZ2C082IRR1500 |
| RHD4CZ2C082TC2200 |  | Installation of HDPE Ducts for Telecom Network - (RD-C-8 /2)-Z2-C082-TC | 11d | 2026-12-19 | 2026-12-30 | RHD4PRSHLDOSTC1000, RHD4PRSHLSTAGTC1000, RHD4CZ2C082TC2100 |
| RHD4CZ2C082TC2400 |  | Backfilling of HDPE Ducts for Telecom Network - (RD-C-8 /2)-Z2-C082-TC | 8d | 2026-12-31 | 2027-01-09 | RHD4CZ2C082TC2200 |
|  | 870 | **RHD4-02-002-C082-(TC)-Telecommunications Manholes** |  | 2027-02-15 | 2027-02-18 |  |
| RHD4CZ2C082TC5100 |  | Excavation for Manholes for Telecom Network - (RD-C-8 /2)-Z2-C082-TC | 2d | 2027-02-15 | 2027-02-16 | RHD4ENSDZ2APPTC190, RHD4CZ2C082TC2100, RHD4CZ2C082SL1100, RHD4CZ2C082SL6100 |
| RHD4CZ2C082TC5200 |  | Installation of Manholes for Telecom Network - (RD-C-8 /2)-Z2-C082-TC | 2d | 2027-02-17 | 2027-02-18 | RHD4PRSHLDOSTC1200, RHD4PRSHLSTAGTC1200, RHD4CZ2C082TC5100, RHD4CZ2C082TC2200 SS, RHD4CZ2C082SL5200 |
|  | 872 | **RHD4-02-002-Z2-C082-Information and Communication Technologies - ICT** |  | 2026-12-09 | 2027-01-06 |  |
|  | 873 | **RHD4-02-002-C082-(ICT)-Information and Communication Technologies Ducts** |  | 2026-12-09 | 2027-01-06 |  |
| RHD4CZ2C082ICT2100 |  | Excavation of HDPE Ducts for ICT Network - (RD-C-8 /2)-Z2-C082-ICT | 7d | 2026-12-09 | 2026-12-16 | RHD4ENSDZ2APPICT200, RHD4CZ2C082IRR1500 |
| RHD4CZ2C082ICT2200 |  | Installation of HDPE Ducts for ICT Network - (RD-C-8 /2)-Z2-C082-ICT | 11d | 2026-12-17 | 2026-12-29 | RHD4PRSHLDOSICT1000, RHD4PRSHLSTAGICT1000, RHD4CZ2C082ICT2100 |
| RHD4CZ2C082ICT2400 |  | Backfilling of HDPE Ducts for ICT Network - (RD-C-8 /2)-Z2-C082-ICT | 7d | 2026-12-30 | 2027-01-06 | RHD4CZ2C082ICT2200, RHD4CZ2C082ICT5200 |
|  | 874 | **RHD4-02-002-C082-(ICT)-Information and Communication Technologies Manholes** |  | 2026-12-17 | 2026-12-23 |  |
| RHD4CZ2C082ICT5100 |  | Excavation for Manholes for ICT Network - (RD-C-8 /2)-Z2-C082-ICT | 3d | 2026-12-17 | 2026-12-20 | RHD4ENSDZ2APPICT200, RHD4CZ2C082ICT2100 |
| RHD4CZ2C082ICT5200 |  | Installation of Manholes for ICT Network - (RD-C-8 /2)-Z2-C082-ICT | 3d | 2026-12-21 | 2026-12-23 | RHD4PRSHLDOSICT1200, RHD4PRSHLSTAGICT1200, RHD4CZ2C082ICT5100 |
|  | 863 | **RHD4-02-002-Z2-C082-Landscape Network - LS** |  |  |  |  |
|  | 864 | **RHD4-02-002-C082-(LS)-Landscape Lighting cables** |  |  |  |  |
|  | 865 | **RHD4-02-002-C082-(LS)-Landscape Feeder Pillars** |  |  |  |  |
|  | 866 | **RHD4-02-002-C082-(LS)-Landscape Bollard Poles** |  |  |  |  |
|  | 867 | **RHD4-02-002-C082-(LS)-Landscape Feeder Pillars Earthing** |  |  |  |  |
|  | 876 | **RHD4-02-002-Z2-C082-Security Network - CCTV** |  | 2027-01-10 | 2027-02-24 |  |
|  | 877 | **RHD4-02-002-C082-(CCTV)-Civil Works** |  | 2027-01-10 | 2027-01-20 |  |
| RHD4CZ2C082CCTV2100 |  | Civil Works for Security Network - (RD-C-8 /2)-Z2-C082-CCTV | 10d | 2027-01-10 | 2027-01-20 | RHD4CZ2C082ICT2400, RHD4CZ2C082TC2400 |
|  | 878 | **RHD4-02-002-C082-(CCTV)-CCTV Poles** |  | 2027-01-21 | 2027-02-01 |  |
| RHD4CZ2C082CCTV1100 |  | Excavation for RC Base for CCTV Poles for Security Network - (RD-C-8 /2)-Z2-C082-CCTV | 2d | 2027-01-21 | 2027-01-23 | RHD4ENSDZ2APPCCTV210, RHD4CZ2C082CCTV2100 |
| RHD4CZ2C082CCTV1200 |  | Installation for RC Base for CCTV Poles for Security Network - (RD-C-8 /2)-Z2-C082-CCTV | 2d | 2027-01-24 | 2027-01-25 | RHD4CZ2C082CCTV1100 |
| RHD4CZ2C082CCTV1300 |  | Backfill for RC Base for CCTV Poles for Security Network - (RD-C-8 /2)-Z2-C082-CCTV | 2d | 2027-01-26 | 2027-01-27 | RHD4CZ2C082CCTV1200 |
| RHD4CZ2C082CCTV1400 |  | Installation for CCTV Poles for Security Network - (RD-C-8 /2)-Z2-C082-CCTV | 2d | 2027-01-28 | 2027-01-30 | RHD4PRSHLDOSCCTV1000, RHD4PRSHLSTACCTV1000, RHD4CZ2C082CCTV1300 |
| RHD4CZ2C082CCTV1500 |  | Protection post Installation for CCTV Poles for Security Network - (RD-C-8 /2)-Z2-C082-CCTV | 2d | 2027-01-31 | 2027-02-01 | RHD4CZ2C082CCTV1400 |
|  | 879 | **RHD4-02-002-C082-(CCTV)-Camera** |  | 2027-02-04 | 2027-02-06 |  |
| RHD4CZ2C082CCTV3100 |  | Installation for Cameras for Security Network - (RD-C-8 /2)-Z2-C082-CCTV | 2d | 2027-02-04 | 2027-02-06 | RHD4PRSHLDOSCCTV1100, RHD4PRSHLSTACCTV1100, RHD4CZ2C082CCTV1400, RHD4CZ2C082CCTV4100, RHD4CZ2C082CCTV4200, RHD4CZ2C082CCTV1500 |
|  | 880 | **RHD4-02-002-C082-(CCTV)-Power and Infrastructure** |  | 2027-01-31 | 2027-02-03 |  |
| RHD4CZ2C082CCTV4100 |  | Installation of Power outlet, UPS and midspan for PTZ Camerafor Cameras for Security Network - (RD-C-8 /2)-Z2-C082-CCTV | 2d | 2027-01-31 | 2027-02-01 | RHD4PRSHLDOSCCTV1300, RHD4PRSHLSTACCTV1300, RHD4CZ2C082CCTV1400 |
| RHD4CZ2C082CCTV4200 |  | Short Range Wireless PoP wireless Bridgefor CCTV Poles for Security Network - (RD-C-8 /2)-Z2-C082-CCTV | 2d | 2027-02-02 | 2027-02-03 | RHD4CZ2C082CCTV4100 |
|  | 882 | **RHD4-02-002-C082-(CCTV)-CCTV Panels and Components** |  | 2027-02-07 | 2027-02-24 |  |
| RHD4CZ2C082CCTV6100 |  | Installation for CCTV Panels for Security Network - (RD-C-8 /2)-Z2-C082-CCTV | 15d | 2027-02-07 | 2027-02-24 | RHD4PRSHLDOSCCTV1200, RHD4PRSHLSTACCTV1200, RHD4PRLOLSTACCTV1001, RHD4CZ2C082CCTV4200, RHD4CZ2C082CCTV3100 |
|  | 324 | **RHD4-02-002-Z1** |  | 2026-08-23 | 2027-09-07 |  |
|  | 514 | **RHD4-02-002-Z1-L101** |  | 2026-08-23 | 2027-08-26 |  |
|  | 545 | **RHD4-02-002-Z1-L101-Crossings Sewage Network - SWCr** |  |  |  |  |
|  | 555 | **RHD4-02-002-L101-(SWCr)-MH Works - 1200 mm diameter** |  |  |  |  |
|  | 556 | **RHD4-02-002-L101-(SWCr)-MH Works - 1200 mm diameter with Back drop** |  |  |  |  |
|  | 551 | **RHD4-02-002-L101-(SWCr)-UPVC Pipes - 200 mm diameter** |  |  |  |  |
|  | 589 | **RHD4-02-002-Z1-L101-Crossings Potable Network - PTCr** |  |  |  |  |
|  | 590 | **RHD4-02-002-L101-(PTCr)-HDPE Pipes - 110 mm diameter** |  |  |  |  |
|  | 595 | **RHD4-02-002-L101-(PTCr)-Gate Valves (Direct Buried)** |  |  |  |  |
|  | 636 | **RHD4-02-002-Z1-L101-Crossings Irrigation Network - IRRC** |  |  |  |  |
|  | 641 | **RHD4-02-002-L101-(IRRC)-HDPE Pipes - 315 mm diameter** |  |  |  |  |
|  | 637 | **RHD4-02-002-L101-(IRRC)-HDPE Pipes - 160 mm diameter** |  |  |  |  |
|  | 645 | **RHD4-02-002-L101-(IRRC)-Gate Valves (Direct Buried)** |  |  |  |  |
|  | 646 | **RHD4-02-002-L101-(IRRC)-Butterfly Valve Chamber** |  |  |  |  |
|  | 647 | **RHD4-02-002-L101-(IRRC)-Butterfly Valves** |  |  |  |  |
|  | 693 | **RHD4-02-002-Z1-L101-Road Works - RD** |  | 2026-09-13 | 2027-08-26 |  |
|  | 694 | **RHD4-02-002-L101-(RD)-Subgrade** |  | 2026-09-13 | 2026-09-19 |  |
| RHD4CZ1L101RD1100 |  | Supply, lay and compaction subgrade compacted thickness 300 mm for Roads - (RD-L-10/1)-Z1-L101-RD | 6d | 2026-09-13 | 2026-09-19 | RHD4ENSDZ1APPRD220, RHD4ENSDZ1APPEW100, RHD4PRSHLDOSSW1000, RHD4PRSHLDOSST1701, RHD4PRSHLSTAGST1700, RHD4CZ1L101ST1505, RHD4CZ1L101ST7300, RHD4CZ1L101ICT3400 |
|  | 695 | **RHD4-02-002-L101-(RD)-Aggregate Base Course** |  | 2026-09-20 | 2026-09-28 |  |
| RHD4CZ1L101RD2100 |  | Supply, lay and compaction Aggregate base course compacted thickness 300 mmfor Roads - (RD-L-10/1)-Z1-L101-RD | 7d | 2026-09-20 | 2026-09-28 | RHD4PRSHLDOSRD1000, RHD4PRSHLSTAGRD1000, RHD4CZ1L101RD1100 |
|  | 696 | **RHD4-02-002-L101-(RD)-Bituminous base course Two Layers, including (MC1)&(RC2)** |  | 2026-09-29 | 2027-07-14 |  |
| RHD4CZ1L101RD3100 |  | Supply, lay and Asphaltic base course including Prime Coat (MC1) for 1st Layer - (RD-L-10/1)-Z1-L101-RD | 2d | 2026-09-29 | 2026-09-30 | RHD4PRSHLDOSRD1100, RHD4ENMSASPH2000, RHD4CZ9L02RD3100, RHD4ENMSASPH2010, RHD4PRSHLSTAGRD1100, RHD4CZ1L101RD2100 |
| RHD4CZ1L101RD3200 |  | Supply, lay and Asphaltic base course including Tack Coat (RC2) for 2nd Layer - (RD-L-10/1)-Z1-L101-RD | 2d | 2027-07-13 | 2027-07-14 | RHD4PRSHLDOSRD1100, RHD4PRSHLSTAGRD1100, RHD4CZ1L101RD3100, RHD4CZ1L101CCTV6100 |
|  | 698 | **RHD4-02-002-L101-(RD)-Precast Concrete Curb** |  | 2027-07-15 | 2027-07-21 |  |
| RHD4CZ1L101RD5100 |  | Supply and installation Precast Concrete Kerb for Roads - (RD-L-10/1)-Z1-L101-RD | 6d | 2027-07-15 | 2027-07-21 | RHD4PRSHLDOSRD1200, RHD4ENMSRD2000, RHD4ENMSRD2010, RHD4PRSHLSTAGRD1200, RHD4CZ1L101RD3200 |
|  | 701 | **RHD4-02-002-L101-(RD)-Traffic Signage** |  | 2027-07-22 | 2027-07-29 |  |
| RHD4CZ1L101RD8100 |  | Installation of Traffic Signage for Road Network - (RD-L-10/1)-Z1-L101-RD | 7d | 2027-07-22 | 2027-07-29 | RHD4PRSHLDOSRD1600, RHD4PRSHLSTAGRD1600, RHD4CZ1L101RD5100, RHD4CZ1L101TC2400, RHD4CZ1L101ICT2400 |
|  | 699 | **RHD4-02-002-L101-(RD)-Precast Interlocking Block Pavers** |  | 2027-07-31 | 2027-08-16 |  |
| RHD4CZ1L101RD6100 |  | Interlocking block pavers for sidewalk-footpath for Side walks and Parking areas - (RD-L-10/1)-Z1-L101-RD | 15d | 2027-07-31 | 2027-08-16 | RHD4PRSHLDOSRD1300, RHD4PRSHLDOSRD1400, RHD4ENMSRD2000, RHD4ENMSRD2010, RHD4PRSHLSTAGRD1300, RHD4PRSHLSTAGRD1400, RHD4CZ1L101RD8100 |
|  | 697 | **RHD4-02-002-L101-(RD)-Bituminous concrete wearing course including tack coat (RC2)** |  | 2027-08-17 | 2027-08-18 |  |
| RHD4CZ1L101RD4100 |  | Supply, lay and compaction Asphaltic wearing course including tack Coat (RC2)for Road Network - (RD-L-10/1)-Z1-L101-RD | 2d | 2027-08-17 | 2027-08-18 | RHD4CZ1L101RD5100, RHD4CZ1L101RD6100 |
|  | 700 | **RHD4-02-002-L101-(RD)-Pavement Marking** |  | 2027-08-19 | 2027-08-26 |  |
| RHD4CZ1L101RD7100 |  | Pavement Markings for Road Network - (RD-L-10/1)-Z1-L101-RD | 7d | 2027-08-19 | 2027-08-26 | RHD4PRSHLDOSRD1500, RHD4PRSHLSTAGRD1500, RHD4CZ1L101RD4100 |
|  | 518 | **RHD4-02-002-Z1-L101-Storm Network - ST** |  | 2026-08-23 | 2026-11-09 |  |

| ID | WBS | Task | Duration | Start | Finish | Predecessors |
| --- | --- | --- | --- | --- | --- | --- |
|  | 537 | **RHD4-02-002-L101-(ST)-MH Works - 2000 mm diameter** |  |  |  |  |
|  | 536 | **RHD4-02-002-L101-(ST)-MH Works - 1500 mm diameter** |  | 2026-09-03 | 2026-10-28 |  |
| RHD4CZ1L101ST3101 |  | Excavation and PC Blinding works for MH 1500 mm - (RD-L-10/1)-Z1-L101-ST | 4d | 2026-09-03 | 2026-09-07 | RHD4ENSDZ1APPST110, RHD4ENMSST2000, RHD4CZ1L101ST1505 |
| RHD4CZ1L101ST3201 |  | Installation of Base for MH 1500 mm - (RD-L-10/1)-Z1-L101-ST | 4d | 2026-09-08 | 2026-09-12 | RHD4PRSHLSTAGST1600, RHD4CZ1L101ST3101 |
| RHD4CZ1L101ST3301 |  | MH Ring and C.Slab works and Backfilling works for MH 1500 mm - (RD-L-10/1)-Z1-L101-ST | 4d | 2026-09-13 | 2026-09-16 | RHD4PRSHLDOSST1600, RHD4CZ1L101ST3201 |
| RHD4CZ1L101ST3401 |  | Steel Cover for MH 1500 mm - (RD-L-10/1)-Z1-L101-ST | 3d | 2026-10-21 | 2026-10-24 | RHD4PRSHLDOSST1700, RHD4PRSHLSTAGST1700, RHD4CZ1L101ST1500, RHD4CZ1L101ST6100 |
| RHD4CZ1L101ST3501 |  | Finishing, Benching, Testing works for MH 1500 mm - (RD-L-10/1)-Z1-L101-ST | 4d | 2026-10-25 | 2026-10-28 | RHD4CZ1L101ST3401 |
|  | 535 | **RHD4-02-002-L101-(ST)-MH Works - 1200 mm diameter** |  | 2026-10-29 | 2026-11-09 |  |
| RHD4CZ1L101ST3100 |  | Excavation and PC Blinding works for MH 1200 mm - (RD-L-10/1)-Z1-L101-ST | 2d | 2026-10-29 | 2026-10-31 | RHD4ENSDZ1APPST110, RHD4ENMSST2000, RHD4ENMSST2010, RHD4CZ1L101ST3501 |
| RHD4CZ1L101ST3200 |  | Installation of Base for MH 1200 mm - (RD-L-10/1)-Z1-L101-ST | 2d | 2026-11-01 | 2026-11-02 | RHD4PRSHLSTAGST1600, RHD4CZ1L101ST3100, RHD4CZ1L101ST3201 |
| RHD4CZ1L101ST3300 |  | MH Ring and C.Slab works and Backfilling works for MH 1200 mm - (RD-L-10/1)-Z1-L101-ST | 2d | 2026-11-03 | 2026-11-04 | RHD4PRSHLDOSST1600, RHD4CZ1L101ST3200, RHD4CZ1L101ST3301 |
| RHD4CZ1L101ST3400 |  | Steel Cover for MH 1200 mm - (RD-L-10/1)-Z1-L101-ST | 2d | 2026-11-05 | 2026-11-07 | RHD4PRSHLDOSST1700, RHD4PRSHLSTAGST1700, RHD4CZ1L101ST1500, RHD4CZ1L101ST6100, RHD4CZ1L101ST3401, RHD4CZ1L101ST3300 |
| RHD4CZ1L101ST3500 |  | Finishing, Benching, Testing works for MH 1200 mm - (RD-L-10/1)-Z1-L101-ST | 2d | 2026-11-08 | 2026-11-09 | RHD4CZ1L101ST3400, RHD4CZ1L101ST3501 |
|  | 525 | **RHD4-02-002-L101-(ST)-GRP Pipes - 1000 mm diameter** |  |  |  |  |
|  | 524 | **RHD4-02-002-L101-(ST)-GRP Pipes - 900 mm diameter** |  | 2026-08-23 | 2026-09-02 |  |
| RHD4CZ1L101ST1105 |  | Excavation works for GRP Pipe Line 900 mm - (RD-L-10/1)-Z1-L101-ST | 2d | 2026-08-23 | 2026-08-24 | RHD4ENSDZ1APPST110, RHD4CZ1L101RW2000, RHD4PRSHLDOSST1300, RHD4CZ5L016ST4600, RHD4CZ6A015ST4600, RHD4CZ5C061ST7500, RHD4CZ4L014TC3400, RHD4CZ5L016ST1502 |
| RHD4CZ1L101ST1205 |  | Bedding works for GRP Pipe Line 900 mm - (RD-L-10/1)-Z1-L101-ST | 2d | 2026-08-25 | 2026-08-26 | RHD4CZ1L101ST1105, RHD4CZ6A02PT3200, RHD4CZ4L014ICT3400, RHD4CZ5L016ST1509, RHD4PRSHLSTAGICT1000 |
| RHD4CZ1L101ST1305 |  | Installing for GRP Pipe Line 900 mm - (RD-L-10/1)-Z1-L101-ST | 2d | 2026-08-27 | 2026-08-29 | RHD4PRSHLSTAGST1000, RHD4CZ1L101ST1205, RHD4PRSHLDOSST1600, RHD4PRSHLPOST1000, RHD4PRSHLDOSST1000 |
| RHD4CZ1L101ST1405 |  | Primary Test for GRP Pipe Line 900 mm - (RD-L-10/1)-Z1-L101-ST | 2d | 2026-08-30 | 2026-08-31 | RHD4CZ1L101ST1305 |
| RHD4CZ1L101ST1505 |  | Backfilling and warning tape works for GRP Pipe Line 900 mm - (RD-L-10/1)-Z1-L101-ST | 2d | 2026-09-01 | 2026-09-02 | RHD4CZ1L101ST1405, RHD4CZ2L102ST3502, RHD4CZ6C052ST8500 |
|  | 523 | **RHD4-02-002-L101-(ST)-GRP Pipes - 800 mm diameter** |  | 2026-09-03 | 2026-09-14 |  |
| RHD4CZ1L101ST1104 |  | Excavation works for GRP Pipe Line 800 mm - (RD-L-10/1)-Z1-L101-ST | 2d | 2026-09-03 | 2026-09-05 | RHD4ENSDZ1APPST110, RHD4CZ1L101ST1505, RHD4CZ6A02PT4500 |
| RHD4CZ1L101ST1204 |  | Bedding works for GRP Pipe Line 800 mm - (RD-L-10/1)-Z1-L101-ST | 2d | 2026-09-06 | 2026-09-07 | RHD4CZ1L101ST1104, RHD4CZ1L101ST1205, RHD4CZ6C052ST7500, RHD4CZ5RA07SW2500, RHD4CZ5RA07SW3500 |
| RHD4CZ1L101ST1304 |  | Installing for GRP Pipe Line 800 mm - (RD-L-10/1)-Z1-L101-ST | 2d | 2026-09-08 | 2026-09-09 | RHD4PRSHLSTAGST1000, RHD4CZ1L101ST1204, RHD4CZ1L101ST1305, RHD4PRSHLDOSST1600, RHD4PRSHLPOST1000, RHD4PRSHLDOSST1000 |
| RHD4CZ1L101ST1404 |  | Primary Test for GRP Pipe Line 800 mm - (RD-L-10/1)-Z1-L101-ST | 2d | 2026-09-10 | 2026-09-12 | RHD4CZ1L101ST1304, RHD4CZ7C013IRR1504, RHD4CZ5A014MV2300, RHD4CZ4L014ST3500, RHD4CZ5C061SW5200, RHD4CZ5C051SW3501 |
| RHD4CZ1L101ST1504 |  | Backfilling and warning tape works for GRP Pipe Line 800 mm - (RD-L-10/1)-Z1-L101-ST | 2d | 2026-09-13 | 2026-09-14 | RHD4CZ1L101ST1404, RHD4CZ1L101ST1505, RHD4CTUN1Z5STG31070 |
|  | 522 | **RHD4-02-002-L101-(ST)-GRP Pipes - 700 mm diameter** |  | 2026-09-15 | 2026-09-27 |  |
| RHD4CZ1L101ST1103 |  | Excavation works for GRP Pipe Line 700 mm - (RD-L-10/1)-Z1-L101-ST | 2d | 2026-09-15 | 2026-09-16 | RHD4ENSDZ1APPST110, RHD4CZ1L101ST1104, RHD4CZ1L101ST1504, RHD4CZ5A014IRR3203, RHD4CZ1C081TC3400, RHD4CZ6C052ST3501, RHD4CZ2C082ST3502 |
| RHD4CZ1L101ST1203 |  | Bedding works for GRP Pipe Line 700 mm - (RD-L-10/1)-Z1-L101-ST | 2d | 2026-09-17 | 2026-09-19 | RHD4CZ1L101ST1103, RHD4CZ1L101ST1204, RHD4CZ5C061SW3501, RHD4CZ5A014IRR3200, RHD4CZ2L102ST8500 |
| RHD4CZ1L101ST1303 |  | Installing for GRP Pipe Line 700 mm - (RD-L-10/1)-Z1-L101-ST | 2d | 2026-09-20 | 2026-09-21 | RHD4PRSHLSTAGST1000, RHD4CZ1L101ST1203, RHD4CZ1L101ST1304, RHD4PRSHLDOSST1600, RHD4PRSHLPOST1000, RHD4PRSHLDOSST1000, RHD4CZ1C081ST8500, RHD4CZ6C052ST3500, RHD4CZ6C052MV2400 |
| RHD4CZ1L101ST1403 |  | Primary Test for GRP Pipe Line 700 mm - (RD-L-10/1)-Z1-L101-ST | 2d | 2026-09-22 | 2026-09-24 | RHD4CZ1L101ST1303, RHD4CZ1C081ST3401 SS, RHD4CZ6C052LV2400 |
| RHD4CZ1L101ST1503 |  | Backfilling and warning tape works for GRP Pipe Line 700 mm - (RD-L-10/1)-Z1-L101-ST | 2d | 2026-09-26 | 2026-09-27 | RHD4CZ1L101ST1403, RHD4CZ1L101ST1504 |
|  | 521 | **RHD4-02-002-L101-(ST)-GRP Pipes - 600 mm diameter** |  | 2026-09-28 | 2026-10-08 |  |
| RHD4CZ1L101ST1102 |  | Excavation works for GRP Pipe Line 600 mm - (RD-L-10/1)-Z1-L101-ST | 2d | 2026-09-28 | 2026-09-29 | RHD4ENSDZ1APPST110, RHD4CZ1L101ST1103, RHD4CZ1L101ST1503, RHD4CZ3L122ST3502 |
| RHD4CZ1L101ST1202 |  | Bedding works for GRP Pipe Line 600 mm - (RD-L-10/1)-Z1-L101-ST | 2d | 2026-09-30 | 2026-10-01 | RHD4CZ1L101ST1102, RHD4CZ1L101ST1203 |
| RHD4CZ1L101ST1302 |  | Installing for GRP Pipe Line 600 mm - (RD-L-10/1)-Z1-L101-ST | 2d | 2026-10-03 | 2026-10-04 | RHD4PRSHLSTAGST1000, RHD4CZ1L101ST1202, RHD4CZ1L101ST1303, RHD4PRSHLDOSST1600, RHD4PRSHLPOST1000, RHD4PRSHLDOSST1000 |
| RHD4CZ1L101ST1402 |  | Primary Test for GRP Pipe Line 600 mm - (RD-L-10/1)-Z1-L101-ST | 2d | 2026-10-05 | 2026-10-06 | RHD4CZ1L101ST1302 |
| RHD4CZ1L101ST1502 |  | Backfilling and warning tape works for GRP Pipe Line 600 mm - (RD-L-10/1)-Z1-L101-ST | 2d | 2026-10-07 | 2026-10-08 | RHD4CZ1L101ST1402, RHD4CZ1L101ST1503 |
|  | 520 | **RHD4-02-002-L101-(ST)-GRP Pipes - 500 mm diameter** |  | 2026-09-30 | 2026-10-11 |  |
| RHD4CZ1L101ST1101 |  | Excavation works for GRP Pipe Line 500 mm - (RD-L-10/1)-Z1-L101-ST | 2d | 2026-09-30 | 2026-10-01 | RHD4ENSDZ1APPST110, RHD4CZ1L101ST1102, RHD4CZ9L05MV2400, RHD4CZ6A02LV3400 |
| RHD4CZ1L101ST1201 |  | Bedding works for GRP Pipe Line 500 mm - (RD-L-10/1)-Z1-L101-ST | 2d | 2026-10-03 | 2026-10-04 | RHD4CZ1L101ST1101, RHD4CZ1L101ST1202 |
| RHD4CZ1L101ST1301 |  | Installing for GRP Pipe Line 500 mm - (RD-L-10/1)-Z1-L101-ST | 2d | 2026-10-05 | 2026-10-06 | RHD4PRSHLSTAGST1000, RHD4CZ1L101ST1201, RHD4CZ1L101ST1302, RHD4PRSHLDOSST1600, RHD4PRSHLPOST1000, RHD4PRSHLDOSST1000 |
| RHD4CZ1L101ST1401 |  | Primary Test for GRP Pipe Line 500 mm - (RD-L-10/1)-Z1-L101-ST | 2d | 2026-10-07 | 2026-10-08 | RHD4CZ1L101ST1301 |
| RHD4CZ1L101ST1501 |  | Backfilling and warning tape works for GRP Pipe Line 500 mm - (RD-L-10/1)-Z1-L101-ST | 2d | 2026-10-10 | 2026-10-11 | RHD4CZ1L101ST1401, RHD4CZ1L101ST1502 |
|  | 519 | **RHD4-02-002-L101-(ST)-GRP Pipes - 400 mm diameter** |  | 2026-10-03 | 2026-10-13 |  |
| RHD4CZ1L101ST1100 |  | Excavation works for GRP Pipe Line 400 mm - (RD-L-10/1)-Z1-L101-ST | 2d | 2026-10-03 | 2026-10-04 | RHD4ENSDZ1APPST110, RHD4CZ1L101ST1101, RHD4CZ7L015SL2400 |
| RHD4CZ1L101ST1200 |  | Bedding works for GRP Pipe Line 400 mm - (RD-L-10/1)-Z1-L101-ST | 2d | 2026-10-05 | 2026-10-06 | RHD4CZ1L101ST1100, RHD4CZ1L101ST1201, RHD4CZ5A014PT3203, RHD4CZ5A014PT4500, RHD4CZ5C061PT3202, RHD4CZ5C061IRR1502 |
| RHD4CZ1L101ST1300 |  | Installing for GRP Pipe Line 400 mm - (RD-L-10/1)-Z1-L101-ST | 2d | 2026-10-07 | 2026-10-08 | RHD4PRSHLSTAGST1000, RHD4CZ1L101ST1200, RHD4CZ1L101ST1301, RHD4PRSHLDOSST1600, RHD4PRSHLPOST1000, RHD4PRSHLDOSST1000, RHD4CZ5C061PT4500, RHD4CZ5A014PT3202, RHD4CZ6C062MV2400 |
| RHD4CZ1L101ST1400 |  | Primary Test for GRP Pipe Line 400 mm - (RD-L-10/1)-Z1-L101-ST | 2d | 2026-10-10 | 2026-10-11 | RHD4CZ1L101ST1300, RHD4CZ5C061PT3200, RHD4CZ7C013IRR3203, RHD4CZ3C083RW2000 |
| RHD4CZ1L101ST1500 |  | Backfilling and warning tape works for GRP Pipe Line 400 mm - (RD-L-10/1)-Z1-L101-ST | 2d | 2026-10-12 | 2026-10-13 | RHD4CZ1L101ST1400, RHD4CZ1L101ST1501, RHD4CZ6C052PT3202, RHD4CZ7C013IRR3200, RHD4CZ6C052PT3203 |
|  | 533 | **RHD4-02-002-L101-(ST)-UPVC Pipes - 300 mm diameter** |  | 2026-10-14 | 2026-10-26 |  |
| RHD4CZ1L101ST2100 |  | Excavation works for UPVC Pipe Line 300 mm - (RD-L-10/1)-Z1-L101-ST | 2d | 2026-10-14 | 2026-10-15 | RHD4ENSDZ1APPST110, RHD4CZ1L101ST7300, RHD4CZ1L101ST1500 |
| RHD4CZ1L101ST2200 |  | Bedding works for UPVC Pipe Line 300 mm - (RD-L-10/1)-Z1-L101-ST | 2d | 2026-10-17 | 2026-10-18 | RHD4CZ1L101ST2100, RHD4CZ6B17EX1002 |
| RHD4CZ1L101ST2300 |  | Installing for UPVC Pipe Line 300 mm - (RD-L-10/1)-Z1-L101-ST | 2d | 2026-10-19 | 2026-10-20 | RHD4PRSHLDOSST1100, RHD4PRSHLSTAGST1100, RHD4CZ1L101ST2200 |
| RHD4CZ1L101ST2400 |  | Primary Test for UPVC Pipe Line 300 mm - (RD-L-10/1)-Z1-L101-ST | 2d | 2026-10-21 | 2026-10-22 | RHD4CZ1L101ST2300, RHD4CZ9L06SL2400 |
| RHD4CZ1L101ST2500 |  | Backfilling and warning tape works for UPVC Pipe Line 300 mm - (RD-L-10/1)-Z1-L101-ST | 3d | 2026-10-24 | 2026-10-26 | RHD4CZ1L101ST2400, RHD4CZ1L101ST6100, RHD4CZ4L09ST1506 |
|  | 541 | **RHD4-02-002-L101-(ST)-Concrete Encasement** |  | 2026-10-19 | 2026-10-20 |  |
| RHD4CZ1L101ST6100 |  | Pipe Encasement for Storm Pipelines - (RD-L-10/1)-Z1-L101-ST | 2d | 2026-10-19 | 2026-10-20 | RHD4CZ1L101ST2300 SS, RHD4CZ1L101ST2300 FF, RHD4CZ1L101ST2200, RHD4CZ1L101RD2100 |
|  | 542 | **RHD4-02-002-Z1-L101-Catch Basin - ST** |  | 2026-08-25 | 2026-11-17 |  |
|  | 543 | **RHD4-02-002-L101-(ST)-Single Catch Basin Works** |  | 2026-08-25 | 2026-11-17 |  |
| RHD4CZ1L101ST7100 |  | Excavation works for Single Catch Basin - (RD-L-10/1)-Z1-L101-ST | 2d | 2026-08-25 | 2026-08-26 | RHD4ENSDZ1APPST110, RHD4CZ1L101ST1105 |
| RHD4CZ1L101ST7200 |  | PC Blinding, Installation and Pipe connection for Single Catch Basin - (RD-L-10/1)-Z1-L101-ST | 2d | 2026-08-27 | 2026-08-29 | RHD4CZ1L101ST7100 |
| RHD4CZ1L101ST7300 |  | Rings & C.Slab & Final Backfill for Single Catch Basin - (RD-L-10/1)-Z1-L101-ST | 2d | 2026-08-30 | 2026-08-31 | RHD4PRSHLDOSST1300, RHD4PRSHLSTAGST1300, RHD4CZ1L101ST7200 |
| RHD4CZ1L101ST7400 |  | Steel Cover for Single Catch Basin - (RD-L-10/1)-Z1-L101-ST | 3d | 2026-11-08 | 2026-11-10 | RHD4PRSHLDOSST1700, RHD4CZ1L101ST7300, RHD4CZ1L101ST3400 |
| RHD4CZ1L101ST7500 |  | Finishing and Insulation works for Single Catch Basin - (RD-L-10/1)-Z1-L101-ST | 6d | 2026-11-11 | 2026-11-17 | RHD4CZ1L101ST7400, RHD4CZ1L101ST3500 |
|  | 567 | **RHD4-02-002-Z1-L101-Sewage Network - SW** |  | 2026-10-27 | 2027-01-10 |  |
|  | 577 | **RHD4-02-002-L101-(SW)-MH Works - 1200 mm diameter** |  | 2026-11-03 | 2027-01-10 |  |
| RHD4CZ1L101SW3100 |  | Excavation and PC Blinding works for MH 1200 mm - (RD-L-10/1)-Z1-L101-SW | 10d | 2026-11-03 | 2026-11-14 | RHD4ENSDZ1APPSW120, RHD4CZ1L101SW2100 |
| RHD4CZ1L101SW3200 |  | Installation of Base for MH 1200 mm - (RD-L-10/1)-Z1-L101-SW | 14d | 2026-11-15 | 2026-11-30 | RHD4CZ1L101SW3100 |
| RHD4CZ1L101SW3300 |  | MH Ring and C.Slab works and Backfilling works for MH 1200 mm - (RD-L-10/1)-Z1-L101-SW | 14d | 2026-12-01 | 2026-12-16 | RHD4PRSHLDOSSW1300, RHD4PRSHLSTAGSW1300, RHD4CZ1L101SW3200 |

| ID | WBS | Task | Duration | Start | Finish | Predecessors |
| --- | --- | --- | --- | --- | --- | --- |
| RHD4CZ1L101SW3400 |  | Steel Cover for MH 1200 mm - (RD-L-10/1)-Z1-L101-SW | 7d | 2026-12-17 | 2026-12-24 | RHD4PRSHLDOSSW1400, RHD4PRSHLSTAGSW1400, RHD4CZ1L101SW3300 |
| RHD4CZ1L101SW3500 |  | Finishing, Benching, Testing works for MH 1200 mm - (RD-L-10/1)-Z1-L101-SW | 14d | 2026-12-26 | 2027-01-10 | RHD4CZ1L101SW3400 |
|  | 578 | **RHD4-02-002-L101-(SW)-MH Works - 1200 mm diameter with Back drop** |  |  |  |  |
|  | 573 | **RHD4-02-002-L101-(SW)-UPVC Pipes - 200 mm diameter** |  | 2026-10-27 | 2026-11-29 |  |
| RHD4CZ1L101SW2100 |  | Excavation works for UPVC Pipe Line 200 mm - (RD-L-10/1)-Z1-L101-SW | 6d | 2026-10-27 | 2026-11-02 | RHD4ENSDZ1APPSW120, RHD4CZ1L101ST2500, RHD4CZ4A013ST8500, RHD4CZ6C052IRR3202, RHD4CZ6C062ST3501 |
| RHD4CZ1L101SW2200 |  | Bedding works for UPVC Pipe Line 200 mm - (RD-L-10/1)-Z1-L101-SW | 6d | 2026-11-03 | 2026-11-09 | RHD4CZ1L101SW2100 |
| RHD4CZ1L101SW2300 |  | Installing for UPVC Pipe Line 200 mm - (RD-L-10/1)-Z1-L101-SW | 7d | 2026-11-10 | 2026-11-17 | RHD4PRSHLDOSSW1000, RHD4CZ1L101ST3300, RHD4PRSHLSTAGSW1000, RHD4CZ1L101SW2200, RHD4CZ6A015ST3500 |
| RHD4CZ1L101SW2400 |  | Primary Test for UPVC Pipe Line 200 mm - (RD-L-10/1)-Z1-L101-SW | 4d | 2026-11-18 | 2026-11-22 | RHD4CZ1L101SW2300, RHD4CZ9C071MV1200 |
| RHD4CZ1L101SW2500 |  | Backfilling and warning tape works for UPVC Pipe Line 200 mm - (RD-L-10/1)-Z1-L101-SW | 6d | 2026-11-23 | 2026-11-29 | RHD4CZ1L101SW2400, RHD4CZ3L122ICT2400 |
|  | 576 | **RHD4-02-002-L101-(SW)-Concrete Encasement** |  |  |  |  |
|  | 604 | **RHD4-02-002-Z1-L101-Potable Network - PT** |  | 2026-11-30 | 2027-01-03 |  |
|  | 606 | **RHD4-02-002-L101-(PT)-HDPE Pipes - 160 mm diameter** |  | 2026-11-30 | 2026-12-22 |  |
| RHD4CZ1L101PT1101 |  | Excavation works for HDPE Pipline 160 mm - (RD-L-10/1)-Z1-L101-PT | 4d | 2026-11-30 | 2026-12-03 | RHD4ENSDZ1APPPT130, RHD4ENMSPT2000, RHD4CZ1L101SW2500, RHD4CZ4C031ST3501 |
| RHD4CZ1L101PT1201 |  | Bedding works for HDPE Pipline 160 mm - (RD-L-10/1)-Z1-L101-PT | 3d | 2026-12-05 | 2026-12-07 | RHD4CZ1L101PT1101, RHD4CZ5L08SW2500, RHD4CZ2L102SW3500 |
| RHD4CZ1L101PT1301 |  | Installing for HDPE Pipline 160 mm - (RD-L-10/1)-Z1-L101-PT | 6d | 2026-12-08 | 2026-12-14 | RHD4PRSHLDOSPT1000, RHD4PRSHLSTAGPT1000, RHD4CZ1L101PT1201 |
| RHD4CZ1L101PT1401 |  | Primary Test for HDPE Pipline 160 mm - (RD-L-10/1)-Z1-L101-PT | 2d | 2026-12-15 | 2026-12-16 | RHD4CZ1L101PT1301 |
| RHD4CZ1L101PT1501 |  | Backfilling and warning tape works for HDPE Pipline 160 mm - (RD-L-10/1)-Z1-L101-PT | 5d | 2026-12-17 | 2026-12-22 | RHD4CZ1L101PT1401, RHD4CZ1C081IRR3200 |
|  | 605 | **RHD4-02-002-L101-(PT)-HDPE Pipes - 110 mm diameter** |  | 2026-11-30 | 2026-12-24 |  |
| RHD4CZ1L101PT1100 |  | Excavation works for HDPE Pipline 110 mm - (RD-L-10/1)-Z1-L101-PT | 2d | 2026-11-30 | 2026-12-01 | RHD4ENSDZ1APPPT130, RHD4ENMSPT2000, RHD4CZ1L101SW2500 |
| RHD4CZ1L101PT1200 |  | Bedding works for HDPE Pipline 110 mm - (RD-L-10/1)-Z1-L101-PT | 2d | 2026-12-08 | 2026-12-09 | RHD4CZ1L101PT1100, RHD4CZ1L101PT1201 |
| RHD4CZ1L101PT1300 |  | Installing for HDPE Pipline 110 mm - (RD-L-10/1)-Z1-L101-PT | 2d | 2026-12-15 | 2026-12-16 | RHD4PRSHLDOSPT1000, RHD4PRSHLSTAGPT1000, RHD4CZ1L101PT1200, RHD4CZ1L101PT1301 |
| RHD4CZ1L101PT1400 |  | Primary Test for HDPE Pipline 110 mm - (RD-L-10/1)-Z1-L101-PT | 2d | 2026-12-17 | 2026-12-19 | RHD4CZ1L101PT1300, RHD4CZ1L101PT1401 |
| RHD4CZ1L101PT1500 |  | Backfilling and warning tape works for HDPE Pipline 110 mm - (RD-L-10/1)-Z1-L101-PT | 2d | 2026-12-23 | 2026-12-24 | RHD4CZ1L101PT1400, RHD4CZ1L101PT1501, RHD4CZ4L014PT3203, RHD4CZ4C031SL1500, RHD4CZ4C031SL6100 |
|  | 421 | **RHD4-02-002-L101-(PT)-Gate Valves (Direct Buried)** |  | 2026-12-26 | 2027-01-03 |  |
| RHD4CZ1L101PT3100 |  | Installation for Direct Buried Gate Valves - (RD-L-10/1)-Z1-L101-PT | 4d | 2026-12-26 | 2026-12-29 | RHD4CZ1L101PT1500 |
| RHD4CZ1L101PT3200 |  | Stem and Service box for Direct Buried Gate Valves - (RD-L-10/1)-Z1-L101-PT | 4d | 2026-12-30 | 2027-01-03 | RHD4CZ1L101PT3100 |
|  | 428 | **RHD4-02-002-L101-(PT)-Fire Hydrant** |  | 2026-11-30 | 2026-12-23 |  |
| RHD4CZ1L101PT4100 |  | Excavation and Bedding and Pipe Installation for Fire Hydrant - (RD-L-10/1)-Z1-L101-PT | 6d | 2026-11-30 | 2026-12-06 | RHD4CZ1L101PT1100 SS |
| RHD4CZ1L101PT4200 |  | Valve Installation for Fire Hydrant - (RD-L-10/1)-Z1-L101-PT | 4d | 2026-12-07 | 2026-12-10 | RHD4CZ1L101PT4100 |
| RHD4CZ1L101PT4300 |  | Stem for Fire Hydrant - (RD-L-10/1)-Z1-L101-PT | 4d | 2026-12-12 | 2026-12-15 | RHD4CZ1L101PT4200 |
| RHD4CZ1L101PT4400 |  | Fire Installation for Fire Hydrant - (RD-L-10/1)-Z1-L101-PT | 4d | 2026-12-16 | 2026-12-20 | RHD4CZ1L101PT4300 |
| RHD4CZ1L101PT4500 |  | Protection Barriers for Fire Hydrant - (RD-L-10/1)-Z1-L101-PT | 3d | 2026-12-21 | 2026-12-23 | RHD4CZ1L101PT4400 |
|  | 618 | **RHD4-02-002-L101-(PT)-Concrete Encasement** |  |  |  |  |
|  | 619 | **RHD4-02-002-Z1-L101-Irrigation Network - IRR** |  | 2027-01-04 | 2027-02-06 |  |
|  | 626 | **RHD4-02-002-L101-(IRR)-HDPE Pipes - 450 mm diameter** |  |  |  |  |
|  | 6107 | **RHD4-02-002-L101-(IRR)-HDPE Pipes - 160 mm diameter** |  | 2027-01-11 | 2027-01-24 |  |
| RHD4CZ1L101IRR1100 |  | Excavation works for HDPE Pipline 160 mm - (RD-L-10/1)-Z1-L101-IRR | 3d | 2027-01-11 | 2027-01-13 | RHD4CZ1L101PT3200, RHD4CZ1L101SW3100, RHD4CZ1L101IRR1104 |
| RHD4CZ1L101IRR1200 |  | Bedding works for HDPE Pipline 160 mm - (RD-L-10/1)-Z1-L101-IRR | 2d | 2027-01-14 | 2027-01-16 | RHD4CZ1L101IRR1100 |
| RHD4CZ1L101IRR1300 |  | Installing for HDPE Pipline 160 mm - (RD-L-10/1)-Z1-L101-IRR | 3d | 2027-01-17 | 2027-01-19 | RHD4CZ1L101IRR1200 |
| RHD4CZ1L101IRR1400 |  | Primary Test for HDPE Pipline 160 mm - (RD-L-10/1)-Z1-L101-IRR | 2d | 2027-01-20 | 2027-01-21 | RHD4CZ1L101IRR1300 |
| RHD4CZ1L101IRR1500 |  | Backfilling and warning tape works for HDPE Pipline 160 mm - (RD-L-10/1)-Z1-L101-IRR | 2d | 2027-01-23 | 2027-01-24 | RHD4CZ1L101IRR1400 |
|  | 6116 | **RHD4-02-002-L101-(IRR)-Butterfly Valve Chamber** |  | 2027-01-14 | 2027-01-23 |  |
| RHD4CZ1L101IRR2100 |  | Excavation and Bedding for Butterfly Valve Chamber for Irrigation Network - (RD-L-10/1)-Z1-L101-IRR | 2d | 2027-01-14 | 2027-01-16 | RHD4CZ1L101IRR1100 |
| RHD4CZ1L101IRR2200 |  | PC works for Butterfly Valve Chamber for Irrigation Network - (RD-L-10/1)-Z1-L101-IRR | 2d | 2027-01-17 | 2027-01-18 | RHD4CZ1L101IRR2100 |
| RHD4CZ1L101IRR2300 |  | Installation for Butterfly Valve Chamber for Irrigation Network - (RD-L-10/1)-Z1-L101-IRR | 2d | 2027-01-19 | 2027-01-20 | RHD4CZ1L101IRR2200 |
| RHD4CZ1L101IRR2400 |  | Backfilling works for Butterfly Valve Chamber for Irrigation Network - (RD-L-10/1)-Z1-L101-IRR | 2d | 2027-01-21 | 2027-01-23 | RHD4CZ1L101IRR2300 |
|  | 6117 | **RHD4-02-002-L101-(IRR)-Butterfly Valves** |  | 2027-01-21 | 2027-01-25 |  |
| RHD4CZ1L101IRR3101 |  | Installation for Butterfly Valves for Irrigation Network - (RD-L-10/1)-Z1-L101-IRR | 2d | 2027-01-21 | 2027-01-23 | RHD4CZ1L101IRR2300 |
| RHD4CZ1L101IRR3201 |  | Stem and Service box for Butterfly Valves for Irrigation Network - (RD-L-10/1)-Z1-L101-IRR | 2d | 2027-01-24 | 2027-01-25 | RHD4CZ1L101IRR3101, RHD4CZ1L101IRR2400 |
|  | 625 | **RHD4-02-002-L101-(IRR)-HDPE Pipes - 400 mm diameter** |  |  |  |  |
|  | 624 | **RHD4-02-002-L101-(IRR)-HDPE Pipes - 315 mm diameter** |  | 2027-01-04 | 2027-01-31 |  |
| RHD4CZ1L101IRR1104 |  | Excavation works for HDPE Pipline 315 mm - (RD-L-10/1)-Z1-L101-IRR | 6d | 2027-01-04 | 2027-01-10 | RHD4ENSDZ1APPIRR140, RHD4ENMSRR2000, RHD4CZ1L101PT3200, RHD4CZ1L101PT1101, RHD4CZ4C031PT3201, RHD4CZ4L014IRR3203 |
| RHD4CZ1L101IRR1204 |  | Bedding works for HDPE Pipline 315 mm - (RD-L-10/1)-Z1-L101-IRR | 5d | 2027-01-11 | 2027-01-16 | RHD4CZ1L101IRR1104, RHD4CZ4C031CCTV1500, RHD4CZ5L016SL2400 |
| RHD4CZ1L101IRR1304 |  | Installing for HDPE Pipline 315 mm - (RD-L-10/1)-Z1-L101-IRR | 6d | 2027-01-17 | 2027-01-23 | RHD4PRSHLDOSIRR1000, RHD4PRSHLSTAGIRR1000, RHD4CZ1L101IRR1204, RHD4CZ4L014IRR3200, RHD4CZ9L05PT4500 |
| RHD4CZ1L101IRR1404 |  | Primary Test for HDPE Pipline 315 mm - (RD-L-10/1)-Z1-L101-IRR | 2d | 2027-01-24 | 2027-01-25 | RHD4CZ1L101IRR1304 |
| RHD4CZ1L101IRR1504 |  | Backfilling and warning tape works for HDPE Pipline 315 mm - (RD-L-10/1)-Z1-L101-IRR | 5d | 2027-01-26 | 2027-01-31 | RHD4CZ1L101IRR1500, RHD4CZ1L101IRR1404 |
|  | 622 | **RHD4-02-002-L101-(IRR)-HDPE Pipes - 200 mm diameter** |  |  |  |  |
|  | 628 | **RHD4-02-002-L101-(IRR)-Gate Valves (Direct Buried)** |  | 2027-01-24 | 2027-02-06 |  |
| RHD4CZ1L101IRR3100 |  | Installation for Direct Buried Gate Valves - (RD-L-10/1)-Z1-L101-IRR | 6d | 2027-01-24 | 2027-01-30 | RHD4PRSHLDOSIRR1100, RHD4PRSHLSTAGIRR1100, RHD4CZ1L101IRR1304 SS, RHD4CZ1L101IRR1304 FF, RHD4CZ1L101PT1101, RHD4CZ1L101PT1101 FF, RHD4CZ1L101PT1100, RHD4CZ1L101PT1100 FF, RHD4CZ1L101IRR1304, RHD4CZ9L06ST3500, RHD4CZ3L122RW3002 FF, RHD4CZ3C083RW3001 FF |
| RHD4CZ1L101IRR3200 |  | Stem and Service box for Direct Buried Gate Valves - (RD-L-10/1)-Z1-L101-IRR | 6d | 2027-01-31 | 2027-02-06 | RHD4PRSHLDOSIRR1300, RHD4PRSHLSTAGIRR1300, RHD4CZ1L101IRR3100, RHD4CZ1L101PT1101, RHD4CZ1L101PT1100, RHD4CZ6A02RD7100 FF, RHD4CZ7A012ST8500, RHD4CZ4RA02CCTV1500 FF |
|  | 653 | **RHD4-02-002-Z1-L101-Medium Voltage Network - MV** |  | 2026-12-01 | 2027-01-09 |  |
|  | 654 | **RHD4-02-002-L101-(MV)-Medium Voltage cable trench** |  | 2026-12-01 | 2026-12-30 |  |
| RHD4CZ1L101MV1100 |  | Excavation for Medium Voltage Trench - (RD-L-10/1)-Z1-L101-MV | 13d | 2026-12-01 | 2026-12-15 | RHD4ENSDZ1APPMV150, RHD4CZ1L101RD3100, RHD4CZ2L011MV5400 |
| RHD4CZ1L101MV1200 |  | Trench Backfilling for Medium Voltage Network - (RD-L-10/1)-Z1-L101-MV | 13d | 2026-12-16 | 2026-12-30 | RHD4CZ1L101MV1100 |
|  | 655 | **RHD4-02-002-L101-(MV)-Medium Voltage duct banks** |  |  |  |  |
|  | 656 | **RHD4-02-002-L101-(MV)-Medium Voltage cables 3Cx 500 mm²** |  | 2026-12-16 | 2027-01-06 |  |
| RHD4CZ1L101MV3100 |  | Installation of Medium Voltage Cables 3Cx 500 mm² - (RD-L-10/1)-Z1-L101-MV | 6d | 2026-12-16 | 2026-12-22 | RHD4PRSHLDOSMV1100, RHD4ENMSMV2000, RHD4ENMSMV2010, RHD4PRSHLSTAGMV1100, RHD4CZ1L101MV1100 |
| RHD4CZ1L101MV3200 |  | Joints Installation of Medium Voltage Cables 3Cx 500 mm² - (RD-L-10/1)-Z1-L101-MV | 2d | 2026-12-23 | 2026-12-24 | RHD4PRSHLDOSMV1300, RHD4PRSHLSTAGMV1300, RHD4CZ1L101MV3100 |
| RHD4CZ1L101MV3300 |  | Testing of Medium Voltage Cables 3Cx 500 mm² - (RD-L-10/1)-Z1-L101-MV | 6d | 2026-12-31 | 2027-01-06 | RHD4CZ1L101MV3200, RHD4CZ1L101MV1200, RHD4CZ1L101MV3100, RHD4CZ1L101MV1100 |
|  | 5387 | **RHD4-02-002-C062-(MV)-Medium Voltage cables 3Cx 50 mm²** |  | 2027-01-07 | 2027-01-09 |  |

| ID | WBS | Task | Duration | Start | Finish | Predecessors |
| --- | --- | --- | --- | --- | --- | --- |
| RHD4CZ1L101MV3401 |  | Termination of Medium Voltage Cables 3Cx 50 mm² - (RD-L-10/1)-Z1-L101-MV | 2d | 2027-01-07 | 2027-01-09 | RHD4CZ1L101MV3300 |
|  | 660 | **RHD4-02-002-Z1-L101-Low Voltage Network - LV** |  | 2027-02-01 | 2027-03-13 |  |
|  | 661 | **RHD4-02-002-L101-(LV)-Low Voltage duct banks** |  | 2027-02-01 | 2027-02-09 |  |
| RHD4CZ1L101LV2100 |  | Excavation of Duct Banks for Low Voltage Network - (RD-L-10/1)-Z1-L101-LV | 2d | 2027-02-01 | 2027-02-02 | RHD4ENSDZ1APPLV160, RHD4CZ1L101IRR3201, RHD4CZ1L101IRR1504 |
| RHD4CZ1L101LV2200 |  | Installation of Duct Banks for Low Voltage Network - (RD-L-10/1)-Z1-L101-LV | 2d | 2027-02-03 | 2027-02-04 | RHD4PRSHLDOSLV1000, RHD4PRSHLSTAGLV1000, RHD4CZ1L101LV2100 |
| RHD4CZ1L101LV2300 |  | Pouring of Duct Banks for Low Voltage Network - (RD-L-10/1)-Z1-L101-LV | 2d | 2027-02-06 | 2027-02-07 | RHD4CZ1L101LV2200 |
| RHD4CZ1L101LV2400 |  | Backfilling of Duct Banks for Low Voltage Network - (RD-L-10/1)-Z1-L101-LV | 2d | 2027-02-08 | 2027-02-09 | RHD4CZ1L101LV2300 |
|  | 662 | **RHD4-02-002-L101-(LV)-Low Voltage Drawpit** |  | 2027-02-08 | 2027-02-11 |  |
| RHD4CZ1L101LV5100 |  | Excavation of Drawpit size 900x900x1000mm for Low Voltage Network - (RD-L-10/1)-Z1-L101-LV | 2d | 2027-02-08 | 2027-02-09 | RHD4ENSDZ1APPLV160, RHD4CZ1L101LV2300, RHD4CZ1L101MV3401 |
| RHD4CZ1L101LV5200 |  | Installation of Drawpit size 900x900x1000mm for Low Voltage Network - (RD-L-10/1)-Z1-L101-LV | 2d | 2027-02-10 | 2027-02-11 | RHD4PRSHLDOSLV1400, RHD4PRSHLSTAGLV1400, RHD4CZ1L101LV5100 |
|  | 663 | **RHD4-02-002-L101-(LV)-Low Voltage cables** |  | 2027-02-10 | 2027-03-13 |  |
| RHD4CZ1L101LV3100 |  | Excavation for Low Voltage Cables for Low Voltage Network - (RD-L-10/1)-Z1-L101-LV | 7d | 2027-02-10 | 2027-02-17 | RHD4ENSDZ1APPLV160, RHD4CZ1L101LV2400, RHD4CZ1L101MV1200, RHD4CZ1L101MV3401, RHD4CZ1L101MV3401 FF |
| RHD4CZ1L101LV3200 |  | Cable Laying of Low Voltage Cables for Low Voltage Network - (RD-L-10/1)-Z1-L101-LV | 6d | 2027-02-18 | 2027-02-25 | RHD4PRSHLDOSLV1100, RHD4ENMSLV2000, RHD4ENMSLV2010, RHD4PRSHLSTAGLV1100, RHD4CZ1L101LV3100 |
| RHD4CZ1L101LV3300 |  | Warning tape and Backfill for Low Voltage Cables for Low Voltage Network - (RD-L-10/1)-Z1-L101-LV | 6d | 2027-02-27 | 2027-03-04 | RHD4CZ1L101LV3200, RHD4CZ1L101LV5200 |
| RHD4CZ1L101LV3400 |  | Testing of Low Voltage Cables for Low Voltage Network - (RD-L-10/1)-Z1-L101-LV | 4d | 2027-03-06 | 2027-03-13 | RHD4CZ1L101LV3300 |
|  | 666 | **RHD4-02-002-Z1-L101-Street Lighting Network - SL** |  | 2027-02-01 | 2027-04-10 |  |
|  | 667 | **RHD4-02-002-L101-(SL)-Street Lighting duct banks** |  | 2027-02-01 | 2027-02-11 |  |
| RHD4CZ1L101SL2100 |  | Excavation of Duct Banks for Street Lighting Network - (RD-L-10/1)-Z1-L101-SL | 2d | 2027-02-01 | 2027-02-02 | RHD4ENSDZ1APPSL170, RHD4CZ1L101IRR1504 |
| RHD4CZ1L101SL2200 |  | Installation of Duct Banks for Street Lighting Network - (RD-L-10/1)-Z1-L101-SL | 2d | 2027-02-06 | 2027-02-07 | RHD4PRSHLDOSSL1000, RHD4PRSHLSTAGSL1000, RHD4CZ1L101SL2100, RHD4CZ1L101LV2200 |
| RHD4CZ1L101SL2300 |  | Pouring of Duct Banks for Street Lighting Network - (RD-L-10/1)-Z1-L101-SL | 2d | 2027-02-08 | 2027-02-09 | RHD4CZ1L101SL2200, RHD4CZ1L101LV2300 |
| RHD4CZ1L101SL2400 |  | Backfilling of Duct Banks for Street Lighting Network - (RD-L-10/1)-Z1-L101-SL | 2d | 2027-02-10 | 2027-02-11 | RHD4CZ1L101SL2300, RHD4CZ1L101LV2400 |
|  | 668 | **RHD4-02-002-L101-(SL)-Street Lighting Drawpit** |  | 2027-02-13 | 2027-02-16 |  |
| RHD4CZ1L101SL5100 |  | Excavation of Drawpit size 600x600x900mm for Street Lighting Network - (RD-L-10/1)-Z1-L101-SL | 2d | 2027-02-13 | 2027-02-14 | RHD4ENSDZ1APPSL170, RHD4CZ1L101MV3401, RHD4CZ1L101LV5200 |
| RHD4CZ1L101SL5200 |  | Installation of Drawpit size 600x600x900mm for Street Lighting Network - (RD-L-10/1)-Z1-L101-SL | 2d | 2027-02-15 | 2027-02-16 | RHD4PRSHLDOSSL1400, RHD4PRSHLSTAGSL1400, RHD4CZ1L101SL5100 |
|  | 669 | **RHD4-02-002-L101-(SL)-Street Lighting cables** |  | 2027-02-28 | 2027-03-29 |  |
| RHD4CZ1L101SL3100 |  | Excavation for Street Lighting Cables for Street Lighting Network - (RD-L-10/1)-Z1-L101-SL | 7d | 2027-02-28 | 2027-03-07 | RHD4ENSDZ1APPSL170, RHD4CZ1L101SL1300, RHD4CZ1L101MV3300, RHD4CZ1L101SL5200 |
| RHD4CZ1L101SL3200 |  | Cable Laying of Street Lighting Cables for Street Lighting Network - (RD-L-10/1)-Z1-L101-SL | 6d | 2027-03-08 | 2027-03-17 | RHD4PRSHLDOSSL1100, RHD4ENMSSL2000, RHD4ENMSSL2010, RHD4PRSHLSTAGSL1100, RHD4CZ1L101SL3100 |
| RHD4CZ1L101SL3300 |  | Warning tape and Backfill for Street Lighting Cables for Street Lighting Network - (RD-L-10/1)-Z1-L101-SL | 6d | 2027-03-18 | 2027-03-24 | RHD4CZ1L101SL3200 |
| RHD4CZ1L101SL3400 |  | Testing of Street Lighting Cables for Street Lighting Network - (RD-L-10/1)-Z1-L101-SL | 4d | 2027-03-25 | 2027-03-29 | RHD4CZ1L101SL3300 |
|  | 670 | **RHD4-02-002-L101-(SL)-Street Lighting Poles** |  | 2027-02-13 | 2027-04-10 |  |
| RHD4CZ1L101SL1100 |  | Excavation for RC Base for Lighting Poles for Street Lighting Network - (RD-L-10/1)-Z1-L101-SL | 4d | 2027-02-13 | 2027-02-16 | RHD4ENSDZ1APPSL170, RHD4CZ1L101SL2400, RHD4CZ1L101MV3200, RHD4CZ1L101MV3401 |
| RHD4CZ1L101SL1200 |  | Installation for RC Base for Lighting Poles for Street Lighting Network - (RD-L-10/1)-Z1-L101-SL | 4d | 2027-02-17 | 2027-02-21 | RHD4CZ1L101SL1100 |
| RHD4CZ1L101SL1300 |  | Backfill for RC Base for Lighting Poles for Street Lighting Network - (RD-L-10/1)-Z1-L101-SL | 4d | 2027-02-23 | 2027-02-27 | RHD4PRLOLSTACCTV1001, RHD4CZ1L101SL1200 |
| RHD4CZ1L101SL1400 |  | Installation for Lighting Poles for Street Lighting Network - (RD-L-10/1)-Z1-L101-SL | 6d | 2027-03-30 | 2027-04-05 | RHD4PRSHLDOSSL1200, RHD4ENMSSL2000, RHD4CZ1L101LV3400, RHD4ENMSSL2010, RHD4PRSHLSTAGSL1200, RHD4CZ1L101SL1300, RHD4CZ1L101SL3400 |
| RHD4CZ1L101SL1500 |  | Luminaire Installation for Lighting Poles for Street Lighting Network - (RD-L-10/1)-Z1-L101-SL | 4d | 2027-04-06 | 2027-04-10 | RHD4PRSHLDOSSL1300, RHD4PRSHLSTAGSL1300, RHD4CZ1L101SL1400 |
|  | 672 | **RHD4-02-002-L101-(SL)-Street Lighting Earthing System** |  | 2027-04-06 | 2027-04-07 |  |
| RHD4CZ1L101SL6100 |  | Installation of Earthing for Lighting Poles and Fedder Pillers for Street Lighting Network - (RD-L-10/1)-Z1-L101-SL | 2d | 2027-04-06 | 2027-04-07 | RHD4ENMSER2000, RHD4ENMSER2010, RHD4CZ1L101SL1400, RHD4CZ1L101SL3300 |
|  | 678 | **RHD4-02-002-Z1-L101-Telecommunications Network - TC** |  | 2027-04-08 | 2027-05-27 |  |
|  | 679 | **RHD4-02-002-L101-(TC)-Telecommunications Ducts** |  | 2027-04-08 | 2027-05-27 |  |
| RHD4CZ1L101TC2100 |  | Excavation of HDPE Ducts for Telecom Network - (RD-L-10/1)-Z1-L101-TC | 11d | 2027-04-08 | 2027-04-20 | RHD4ENSDZ1APPTC190, RHD4CZ1L101IRR1504, RHD4CZ1L101SL6100 |
| RHD4CZ1L101TC2200 |  | Installation of HDPE Ducts for Telecom Network - (RD-L-10/1)-Z1-L101-TC | 17d | 2027-04-21 | 2027-05-10 | RHD4PRSHLDOSTC1000, RHD4PRSHLSTAGTC1000, RHD4CZ1L101TC2100 |
| RHD4CZ1L101TC2400 |  | Backfilling of HDPE Ducts for Telecom Network - (RD-L-10/1)-Z1-L101-TC | 11d | 2027-05-11 | 2027-05-27 | RHD4CZ1L101TC2200, RHD4CZ1L101TC5200 |
|  | 680 | **RHD4-02-002-L101-(TC)-Telecommunications Manholes** |  | 2027-04-21 | 2027-05-02 |  |
| RHD4CZ1L101TC5100 |  | Excavation for Manholes for Telecom Network - (RD-L-10/1)-Z1-L101-TC | 5d | 2027-04-21 | 2027-04-26 | RHD4ENSDZ1APPTC190, RHD4CZ1L101TC2100 |
| RHD4CZ1L101TC5200 |  | Installation of Manholes for Telecom Network - (RD-L-10/1)-Z1-L101-TC | 5d | 2027-04-27 | 2027-05-02 | RHD4PRSHLDOSTC1200, RHD4PRSHLSTAGTC1200, RHD4CZ1L101TC5100, RHD4CZ1L101TC2200 SS |
|  | 681 | **RHD4-02-002-L101-(TC)-Telecomminications Road Crossings** |  |  |  |  |
|  | 682 | **RHD4-02-002-Z1-L101-Information and Communication Technologies - ICT** |  | 2026-09-03 | 2027-05-12 |  |
|  | 683 | **RHD4-02-002-L101-(ICT)-Information and Communication Technologies Ducts** |  | 2027-03-30 | 2027-05-12 |  |
| RHD4CZ1L101ICT2100 |  | Excavation of HDPE Ducts for ICT Network - (RD-L-10/1)-Z1-L101-ICT | 11d | 2027-03-30 | 2027-04-11 | RHD4ENSDZ1APPICT200, RHD4CZ1L101ICT3400, RHD4CZ1L101SL3400 |
| RHD4CZ1L101ICT2200 |  | Installation of HDPE Ducts for ICT Network - (RD-L-10/1)-Z1-L101-ICT | 16d | 2027-04-12 | 2027-04-29 | RHD4PRSHLDOSICT1000, RHD4PRSHLSTAGICT1000, RHD4CZ1L101ICT2100 |
| RHD4CZ1L101ICT2400 |  | Backfilling of HDPE Ducts for ICT Network - (RD-L-10/1)-Z1-L101-ICT | 11d | 2027-05-01 | 2027-05-12 | RHD4CZ1L101ICT2200 |
|  | 684 | **RHD4-02-002-L101-(ICT)-Information and Communication Technologies Manholes** |  | 2027-04-12 | 2027-04-22 |  |
| RHD4CZ1L101ICT5100 |  | Excavation for Manholes for ICT Network - (RD-L-10/1)-Z1-L101-ICT | 5d | 2027-04-12 | 2027-04-17 | RHD4ENSDZ1APPICT200, RHD4CZ1L101ICT2100 |
| RHD4CZ1L101ICT5200 |  | Installation of Manholes for ICT Network - (RD-L-10/1)-Z1-L101-ICT | 5d | 2027-04-18 | 2027-04-22 | RHD4PRSHLDOSICT1200, RHD4PRSHLSTAGICT1200, RHD4CZ1L101ICT5100, RHD4CZ1L101PT4500 |
|  | 685 | **RHD4-02-002-L101-(ICT)-Information and Communication Technologies Road Crossings** |  | 2026-09-03 | 2026-09-12 |  |
| RHD4CZ1L101ICT3100 |  | Excavation for Road Crossings for ICT Network - (RD-L-10/1)-Z1-L101-ICT | 2d | 2026-09-03 | 2026-09-05 | RHD4ENSDZ1APPICT200, RHD4CZ1L101ST1505 |
| RHD4CZ1L101ICT3200 |  | Installation of Road Crossings for ICT Network - (RD-L-10/1)-Z1-L101-ICT | 2d | 2026-09-06 | 2026-09-07 | RHD4PRSHLDOSICT1100, RHD4PRSHLSTAGICT1100, RHD4CZ1L101ICT3100 |
| RHD4CZ1L101ICT3300 |  | Pouring of Road Crossings for ICT Network - (RD-L-10/1)-Z1-L101-ICT | 2d | 2026-09-08 | 2026-09-09 | RHD4CZ1L101ICT3200 |
| RHD4CZ1L101ICT3400 |  | Backfilling of Road Crossings for ICT Network - (RD-L-10/1)-Z1-L101-ICT | 2d | 2026-09-10 | 2026-09-12 | RHD4CZ1L101ICT3300 |
|  | 673 | **RHD4-02-002-Z1-L101-Landscape Network - LS** |  |  |  |  |
|  | 674 | **RHD4-02-002-L101-(LS)-Landscape Lighting cables** |  |  |  |  |
|  | 675 | **RHD4-02-002-L101-(LS)-Landscape Feeder Pillars** |  |  |  |  |
|  | 676 | **RHD4-02-002-L101-(LS)-Landscape Bollard Poles** |  |  |  |  |
|  | 677 | **RHD4-02-002-L101-(LS)-Landscape Feeder Pillars Earthing** |  |  |  |  |
|  | 686 | **RHD4-02-002-Z1-L101-Security Network - CCTV** |  | 2027-05-29 | 2027-07-12 |  |
|  | 687 | **RHD4-02-002-L101-(CCTV)-Civil Works** |  | 2027-05-29 | 2027-06-08 |  |
| RHD4CZ1L101CCTV2100 |  | Civil Works for Security Network - (RD-L-10/1)-Z1-L101-CCTV | 10d | 2027-05-29 | 2027-06-08 | RHD4CZ1L101ICT2400, RHD4CZ1L101TC2400 |
|  | 688 | **RHD4-02-002-L101-(CCTV)-CCTV Poles** |  | 2027-06-09 | 2027-06-20 |  |
| RHD4CZ1L101CCTV1100 |  | Excavation for RC Base for CCTV Poles for Security Network - (RD-L-10/1)-Z1-L101-CCTV | 2d | 2027-06-09 | 2027-06-10 | RHD4ENSDZ1APPCCTV210, RHD4CZ1L101CCTV2100 |
| RHD4CZ1L101CCTV1200 |  | Installation for RC Base for CCTV Poles for Security Network - (RD-L-10/1)-Z1-L101-CCTV | 2d | 2027-06-12 | 2027-06-13 | RHD4CZ1L101CCTV1100 |

| ID | WBS | Task | Duration | Start | Finish | Predecessors |
| --- | --- | --- | --- | --- | --- | --- |
| RHD4CZ1L101CCTV1300 |  | Backfill for RC Base for CCTV Poles for Security Network - (RD-L-10/1)-Z1-L101-CCTV | 2d | 2027-06-14 | 2027-06-15 | RHD4CZ1L101CCTV1200 |
| RHD4CZ1L101CCTV1400 |  | Installation for CCTV Poles for Security Network - (RD-L-10/1)-Z1-L101-CCTV | 2d | 2027-06-16 | 2027-06-17 | RHD4PRSHLDOSCCTV1000, RHD4PRSHLSTACCTV1000, RHD4CZ1L101CCTV1300 |
| RHD4CZ1L101CCTV1500 |  | Protection post Installation for CCTV Poles for Security Network - (RD-L-10/1)-Z1-L101-CCTV | 2d | 2027-06-19 | 2027-06-20 | RHD4CZ1L101CCTV1400 |
|  | 689 | **RHD4-02-002-L101-(CCTV)-Camera** |  | 2027-06-23 | 2027-06-24 |  |
| RHD4CZ1L101CCTV3100 |  | Installation for Cameras for Security Network - (RD-L-10/1)-Z1-L101-CCTV | 2d | 2027-06-23 | 2027-06-24 | RHD4PRSHLDOSCCTV1100, RHD4PRSHLSTACCTV1100, RHD4CZ1L101CCTV1400, RHD4CZ1L101CCTV4100, RHD4CZ1L101CCTV4200 |
|  | 690 | **RHD4-02-002-L101-(CCTV)-Power and Infrastructure** |  | 2027-06-19 | 2027-06-22 |  |
| RHD4CZ1L101CCTV4100 |  | Installation of Power outlet, UPS and midspan for PTZ Camerafor Cameras for Security Network - (RD-L-10/1)-Z1-L101-CCTV | 2d | 2027-06-19 | 2027-06-20 | RHD4PRSHLDOSCCTV1300, RHD4PRSHLSTACCTV1300, RHD4CZ1L101CCTV1400 |
| RHD4CZ1L101CCTV4200 |  | Short Range Wireless PoP wireless Bridgefor CCTV Poles for Security Network - (RD-L-10/1)-Z1-L101-CCTV | 2d | 2027-06-21 | 2027-06-22 | RHD4CZ1L101CCTV4100 |
|  | 692 | **RHD4-02-002-L101-(CCTV)-CCTV Panels and Components** |  | 2027-06-26 | 2027-07-12 |  |
| RHD4CZ1L101CCTV6100 |  | Installation for CCTV Panels for Security Network - (RD-L-10/1)-Z1-L101-CCTV | 15d | 2027-06-26 | 2027-07-12 | RHD4PRSHLDOSCCTV1200, RHD4PRSHLSTACCTV1200, RHD4PRLOLSTACCTV1001, RHD4CZ1L101CCTV4200, RHD4CZ1L101CCTV3100 |
|  | 325 | **RHD4-02-002-Z1-C081** |  | 2026-08-23 | 2027-09-07 |  |
|  | 356 | **RHD4-02-002-Z1-C081-Crossings Sewage Network - SWCr** |  |  |  |  |
|  | 366 | **RHD4-02-002-C081-(SWCr)-MH Works - 1200 mm diameter** |  |  |  |  |
|  | 362 | **RHD4-02-002-C081-(SWCr)-UPVC Pipes - 200 mm diameter** |  |  |  |  |
|  | 400 | **RHD4-02-002-Z1-C081-Crossings Potable Network - PTCr** |  |  |  |  |
|  | 403 | **RHD4-02-002-C081-(PTCr)-HDPE Pipes - 200 mm diameter** |  |  |  |  |
|  | 406 | **RHD4-02-002-C081-(PTCr)-Gate Valves (Direct Buried)** |  |  |  |  |
|  | 413 | **RHD4-02-002-C081-(PTCr)-Fire Hydrant** |  |  |  |  |
|  | 447 | **RHD4-02-002-Z1-C081-Crossings Irrigation Network - IRRC** |  |  |  |  |
|  | 452 | **RHD4-02-002-C081-(IRRC)-HDPE Pipes - 315 mm diameter** |  |  |  |  |
|  | 448 | **RHD4-02-002-C081-(IRRC)-HDPE Pipes - 160 mm diameter** |  |  |  |  |
|  | 456 | **RHD4-02-002-C081-(IRRC)-Gate Valves (Direct Buried)** |  |  |  |  |
|  | 457 | **RHD4-02-002-C081-(IRRC)-Butterfly Valve Chamber** |  |  |  |  |
|  | 458 | **RHD4-02-002-C081-(IRRC)-Butterfly Valves** |  |  |  |  |
|  | 461 | **RHD4-02-002-C081-(IRRC)-Air Valve Chamber** |  |  |  |  |
|  | 462 | **RHD4-02-002-C081-(IRRC)-Air Valves** |  |  |  |  |
|  | 504 | **RHD4-02-002-Z1-C081-Road Works - RD** |  | 2026-09-13 | 2027-09-07 |  |
|  | 505 | **RHD4-02-002-C081-(RD)-Subgrade** |  | 2026-09-13 | 2026-09-19 |  |
| RHD4CZ1C081RD1100 |  | Supply, lay and compaction subgrade compacted thickness 300 mm for Roads - (RD-C-8 /1)-Z1-C081-RD | 6d | 2026-09-13 | 2026-09-19 | RHD4ENSDZ1APPRD220, RHD4ENSDZ1APPEW100, RHD4CZ1C081ST1504, RHD4CZ1C081ST7300, RHD4CZ1C081ST8300 |
|  | 506 | **RHD4-02-002-C081-(RD)-Aggregate Base Course** |  | 2026-09-20 | 2026-09-27 |  |
| RHD4CZ1C081RD2100 |  | Supply, lay and compaction Aggregate base course compacted thickness 300 mmfor Roads - (RD-C-8 /1)-Z1-C081-RD | 6d | 2026-09-20 | 2026-09-27 | RHD4PRSHLDOSRD1000, RHD4PRSHLSTAGRD1000, RHD4CZ1C081RD1100 |
|  | 507 | **RHD4-02-002-C081-(RD)-Bituminous base course Two Layers, including (MC1)&(RC2)** |  | 2026-09-28 | 2027-06-24 |  |
| RHD4CZ1C081RD3100 |  | Supply, lay and Asphaltic base course including Prime Coat (MC1) for 1st Layer - (RD-C-8 /1)-Z1-C081-RD | 3d | 2026-09-28 | 2026-09-30 | RHD4PRSHLDOSRD1100, RHD4ENMSASPH2000, RHD4ENMSASPH2010, RHD4PRSHLSTAGRD1100, RHD4CZ1C081RD2100 |
| RHD4CZ1C081RD3200 |  | Supply, lay and Asphaltic base course including Tack Coat (RC2) for 2nd Layer - (RD-C-8 /1)-Z1-C081-RD | 3d | 2027-06-22 | 2027-06-24 | RHD4PRSHLDOSRD1100, RHD4PRSHLSTAGRD1100, RHD4CZ1C081RD3100, RHD4CZ1C081CCTV6100 |
|  | 509 | **RHD4-02-002-C081-(RD)-Precast Concrete Curb** |  | 2027-06-26 | 2027-07-05 |  |
| RHD4CZ1C081RD5100 |  | Supply and installation Precast Concrete Kerb for Roads - (RD-C-8 /1)-Z1-C081-RD | 9d | 2027-06-26 | 2027-07-05 | RHD4PRSHLDOSRD1200, RHD4ENMSRD2000, RHD4ENMSRD2010, RHD4PRSHLSTAGRD1200, RHD4CZ1C081RD3200 |
|  | 512 | **RHD4-02-002-C081-(RD)-Traffic Signage** |  | 2027-07-31 | 2027-08-07 |  |
| RHD4CZ1C081RD8100 |  | Installation of Traffic Signage for Road Network - (RD-C-8 /1)-Z1-C081-RD | 7d | 2027-07-31 | 2027-08-07 | RHD4PRSHLDOSRD1600, RHD4PRSHLSTAGRD1600, RHD4CZ1C081RD5100, RHD4CZ1C081TC2400, RHD4CZ1C081ICT2400, RHD4CZ1L101RD8100, RHD4CZ1C081IRR1500 |
|  | 510 | **RHD4-02-002-C081-(RD)-Precast Interlocking Block Pavers** |  |  |  |  |
|  | 508 | **RHD4-02-002-C081-(RD)-Bituminous concrete wearing course including tack coat (RC2)** |  | 2027-08-19 | 2027-08-21 |  |
| RHD4CZ1C081RD4100 |  | Supply, lay and compaction Asphaltic wearing course including tack Coat (RC2)for Road Network - (RD-C-8 /1)-Z1-C081-RD | 2d | 2027-08-19 | 2027-08-21 | RHD4CZ1L101RD4100, RHD4CZ1C081RD5100 |
|  | 511 | **RHD4-02-002-C081-(RD)-Pavement Marking** |  | 2027-08-28 | 2027-09-07 |  |
| RHD4CZ1C081RD7100 |  | Pavement Markings for Road Network - (RD-C-8 /1)-Z1-C081-RD | 10d | 2027-08-28 | 2027-09-07 | RHD4PRSHLDOSRD1500, RHD4PRSHLSTAGRD1500, RHD4CZ1C081RD4100, RHD4CZ1L101RD7100 |
|  | 329 | **RHD4-02-002-Z1-C081-Storm Network - ST** |  | 2026-08-23 | 2026-10-31 |  |
|  | 5253 | **RHD4-02-002-C081-(ST)-GRP Pipes - 800 mm diameter** |  | 2026-08-23 | 2026-09-02 |  |
| RHD4CZ1C081ST1104 |  | Excavation works for GRP Pipe Line 800 mm - (RD-C-8 /1)-Z1-C081-ST | 2d | 2026-08-23 | 2026-08-24 | RHD4CZ1C081RW2000, RHD4PRSHLSTAGST1000 |
| RHD4CZ1C081ST1204 |  | Bedding works for GRP Pipe Line 800 mm - (RD-C-8 /1)-Z1-C081-ST | 2d | 2026-08-25 | 2026-08-26 | RHD4CZ1C081ST1104 |
| RHD4CZ1C081ST1304 |  | Installing for GRP Pipe Line 800 mm - (RD-C-8 /1)-Z1-C081-ST | 2d | 2026-08-27 | 2026-08-29 | RHD4CZ1C081ST1204 |
| RHD4CZ1C081ST1404 |  | Primary Test for GRP Pipe Line 800 mm - (RD-C-8 /1)-Z1-C081-ST | 2d | 2026-08-30 | 2026-08-31 | RHD4CZ1C081ST1304 |
| RHD4CZ1C081ST1504 |  | Backfilling and warning tape works for GRP Pipe Line 800 mm - (RD-C-8 /1)-Z1-C081-ST | 2d | 2026-09-01 | 2026-09-02 | RHD4CZ1C081ST1404 |
|  | 346 | **RHD4-02-002-C081-(ST)-MH Works - 1200 mm diameter** |  | 2026-08-25 | 2026-09-22 |  |
| RHD4CZ1C081ST3100 |  | Excavation and PC Blinding works for MH 1200 mm - (RD-C-8 /1)-Z1-C081-ST | 5d | 2026-08-25 | 2026-08-30 | RHD4ENSDZ1APPST110, RHD4ENMSST2000, RHD4ENMSST2010, RHD4CZ1C081ST1104 |
| RHD4CZ1C081ST3200 |  | Installation of Base for MH 1200 mm - (RD-C-8 /1)-Z1-C081-ST | 5d | 2026-08-31 | 2026-09-05 | RHD4PRSHLSTAGST1600, RHD4CZ1C081ST3100 |
| RHD4CZ1C081ST3300 |  | MH Ring and C.Slab works and Backfilling works for MH 1200 mm - (RD-C-8 /1)-Z1-C081-ST | 5d | 2026-09-06 | 2026-09-10 | RHD4PRSHLDOSST1600, RHD4CZ1C081ST3200 |
| RHD4CZ1C081ST3400 |  | Steel Cover for MH 1200 mm - (RD-C-8 /1)-Z1-C081-ST | 5d | 2026-09-12 | 2026-09-16 | RHD4PRSHLDOSST1700, RHD4PRSHLSTAGST1700, RHD4CZ1C081ST3300 |
| RHD4CZ1C081ST3500 |  | Finishing, Benching, Testing works for MH 1200 mm - (RD-C-8 /1)-Z1-C081-ST | 5d | 2026-09-17 | 2026-09-22 | RHD4CZ1C081ST3400 |
|  | 347 | **RHD4-02-002-C081-(ST)-MH Works - 1500 mm diameter** |  | 2026-08-31 | 2026-10-31 |  |
| RHD4CZ1C081ST3101 |  | Excavation and PC Blinding works for MH 1500 mm - (RD-C-8 /1)-Z1-C081-ST | 4d | 2026-08-31 | 2026-09-03 | RHD4ENSDZ1APPST110, RHD4ENMSST2000, RHD4CZ1C081ST3100 |
| RHD4CZ1C081ST3201 |  | Installation of Base for MH 1500 mm - (RD-C-8 /1)-Z1-C081-ST | 4d | 2026-09-06 | 2026-09-09 | RHD4PRSHLSTAGST1600, RHD4CZ1C081ST3101, RHD4CZ1C081ST3200 |
| RHD4CZ1C081ST3301 |  | MH Ring and C.Slab works and Backfilling works for MH 1500 mm - (RD-C-8 /1)-Z1-C081-ST | 4d | 2026-09-12 | 2026-09-15 | RHD4PRSHLDOSST1600, RHD4CZ1C081ST3201, RHD4CZ1C081ST3300 |
| RHD4CZ1C081ST3401 |  | Steel Cover for MH 1500 mm - (RD-C-8 /1)-Z1-C081-ST | 2d | 2026-09-17 | 2026-09-19 | RHD4PRSHLDOSST1700, RHD4PRSHLSTAGST1700, RHD4CZ1C081ST3301, RHD4CZ1C081ST3400 |
| RHD4CZ1C081ST3501 |  | Finishing, Benching, Testing works for MH 1500 mm - (RD-C-8 /1)-Z1-C081-ST | 4d | 2026-10-27 | 2026-10-31 | RHD4CZ1C081ST3401, RHD4CZ1C081ST2500, RHD4CZ1C081ST3500 |
|  | 335 | **RHD4-02-002-C081-(ST)-GRP Pipes - 900 mm diameter** |  | 2026-09-06 | 2026-09-16 |  |
| RHD4CZ1C081ST1105 |  | Excavation works for GRP Pipe Line 900 mm - (RD-C-8 /1)-Z1-C081-ST | 2d | 2026-09-06 | 2026-09-07 | RHD4ENSDZ1APPST110, RHD4CZ1C081ST3300 SS |
| RHD4CZ1C081ST1205 |  | Bedding works for GRP Pipe Line 900 mm - (RD-C-8 /1)-Z1-C081-ST | 2d | 2026-09-08 | 2026-09-09 | RHD4CZ1C081ST1105 |
| RHD4CZ1C081ST1305 |  | Installing for GRP Pipe Line 900 mm - (RD-C-8 /1)-Z1-C081-ST | 2d | 2026-09-10 | 2026-09-12 | RHD4PRSHLSTAGST1000, RHD4CZ1C081ST1205, RHD4PRSHLDOSST1600, RHD4PRSHLPOST1000, RHD4PRSHLDOSST1000 |
| RHD4CZ1C081ST1405 |  | Primary Test for GRP Pipe Line 900 mm - (RD-C-8 /1)-Z1-C081-ST | 2d | 2026-09-13 | 2026-09-14 | RHD4CZ1C081ST1305 |
| RHD4CZ1C081ST1505 |  | Backfilling and warning tape works for GRP Pipe Line 900 mm - (RD-C-8 /1)-Z1-C081-ST | 2d | 2026-09-15 | 2026-09-16 | RHD4CZ1C081ST1405 |
|  | 333 | **RHD4-02-002-C081-(ST)-GRP Pipes - 700 mm diameter** |  | 2026-09-08 | 2026-09-19 |  |
| RHD4CZ1C081ST1103 |  | Excavation works for GRP Pipe Line 700 mm - (RD-C-8 /1)-Z1-C081-ST | 2d | 2026-09-08 | 2026-09-09 | RHD4ENSDZ1APPST110, RHD4CZ1C081ST1105 |

| ID | WBS | Task | Duration | Start | Finish | Predecessors |
| --- | --- | --- | --- | --- | --- | --- |
| RHD4CZ1C081ST1203 |  | Bedding works for GRP Pipe Line 700 mm - (RD-C-8 /1)-Z1-C081-ST | 2d | 2026-09-10 | 2026-09-12 | RHD4CZ1C081ST1103, RHD4CZ1C081ST1205 |
| RHD4CZ1C081ST1303 |  | Installing for GRP Pipe Line 700 mm - (RD-C-8 /1)-Z1-C081-ST | 2d | 2026-09-13 | 2026-09-14 | RHD4PRSHLSTAGST1000, RHD4CZ1C081ST1203, RHD4CZ1C081ST1305, RHD4PRSHLDOSST1600, RHD4PRSHLPOST1000, RHD4PRSHLDOSST1000 |
| RHD4CZ1C081ST1403 |  | Primary Test for GRP Pipe Line 700 mm - (RD-C-8 /1)-Z1-C081-ST | 2d | 2026-09-15 | 2026-09-16 | RHD4CZ1C081ST1303, RHD4CZ1C081ST1405 |
| RHD4CZ1C081ST1503 |  | Backfilling and warning tape works for GRP Pipe Line 700 mm - (RD-C-8 /1)-Z1-C081-ST | 2d | 2026-09-17 | 2026-09-19 | RHD4CZ1C081ST1403, RHD4CZ1C081ST1505 |
|  | 332 | **RHD4-02-002-C081-(ST)-GRP Pipes - 600 mm diameter** |  | 2026-09-10 | 2026-09-21 |  |
| RHD4CZ1C081ST1102 |  | Excavation works for GRP Pipe Line 600 mm - (RD-C-8 /1)-Z1-C081-ST | 2d | 2026-09-10 | 2026-09-12 | RHD4ENSDZ1APPST110, RHD4CZ1C081ST1103 |
| RHD4CZ1C081ST1202 |  | Bedding works for GRP Pipe Line 600 mm - (RD-C-8 /1)-Z1-C081-ST | 2d | 2026-09-13 | 2026-09-14 | RHD4CZ1C081ST1102, RHD4CZ1C081ST1203 |
| RHD4CZ1C081ST1302 |  | Installing for GRP Pipe Line 600 mm - (RD-C-8 /1)-Z1-C081-ST | 2d | 2026-09-15 | 2026-09-16 | RHD4PRSHLSTAGST1000, RHD4CZ1C081ST1202, RHD4CZ1C081ST1303, RHD4PRSHLDOSST1600, RHD4PRSHLPOST1000, RHD4PRSHLDOSST1000 |
| RHD4CZ1C081ST1402 |  | Primary Test for GRP Pipe Line 600 mm - (RD-C-8 /1)-Z1-C081-ST | 2d | 2026-09-17 | 2026-09-19 | RHD4CZ1C081ST1302, RHD4CZ1C081ST1403 |
| RHD4CZ1C081ST1502 |  | Backfilling and warning tape works for GRP Pipe Line 600 mm - (RD-C-8 /1)-Z1-C081-ST | 2d | 2026-09-20 | 2026-09-21 | RHD4CZ1C081ST1402, RHD4CZ1C081ST1503 |
|  | 331 | **RHD4-02-002-C081-(ST)-GRP Pipes - 500 mm diameter** |  | 2026-09-13 | 2026-09-24 |  |
| RHD4CZ1C081ST1101 |  | Excavation works for GRP Pipe Line 500 mm - (RD-C-8 /1)-Z1-C081-ST | 2d | 2026-09-13 | 2026-09-14 | RHD4ENSDZ1APPST110, RHD4CZ1C081ST1102 |
| RHD4CZ1C081ST1201 |  | Bedding works for GRP Pipe Line 500 mm - (RD-C-8 /1)-Z1-C081-ST | 2d | 2026-09-15 | 2026-09-16 | RHD4CZ1C081ST1101, RHD4CZ1C081ST1202 |
| RHD4CZ1C081ST1301 |  | Installing for GRP Pipe Line 500 mm - (RD-C-8 /1)-Z1-C081-ST | 2d | 2026-09-17 | 2026-09-19 | RHD4PRSHLSTAGST1000, RHD4CZ1C081ST1201, RHD4CZ1C081ST1302, RHD4PRSHLDOSST1600, RHD4PRSHLPOST1000, RHD4PRSHLDOSST1000 |
| RHD4CZ1C081ST1401 |  | Primary Test for GRP Pipe Line 500 mm - (RD-C-8 /1)-Z1-C081-ST | 2d | 2026-09-20 | 2026-09-21 | RHD4CZ1C081ST1301, RHD4CZ1C081ST1402 |
| RHD4CZ1C081ST1501 |  | Backfilling and warning tape works for GRP Pipe Line 500 mm - (RD-C-8 /1)-Z1-C081-ST | 2d | 2026-09-22 | 2026-09-24 | RHD4CZ1C081ST1401, RHD4CZ1C081ST1502 |
|  | 330 | **RHD4-02-002-C081-(ST)-GRP Pipes - 400 mm diameter** |  | 2026-09-13 | 2026-10-06 |  |
| RHD4CZ1C081ST1100 |  | Excavation works for GRP Pipe Line 400 mm - (RD-C-8 /1)-Z1-C081-ST | 4d | 2026-09-13 | 2026-09-16 | RHD4ENSDZ1APPST110, RHD4CZ1C081ST1101 SS |
| RHD4CZ1C081ST1200 |  | Bedding works for GRP Pipe Line 400 mm - (RD-C-8 /1)-Z1-C081-ST | 4d | 2026-09-17 | 2026-09-21 | RHD4CZ1C081ST1100, RHD4CZ1C081ST1201 |
| RHD4CZ1C081ST1300 |  | Installing for GRP Pipe Line 400 mm - (RD-C-8 /1)-Z1-C081-ST | 4d | 2026-09-22 | 2026-09-27 | RHD4PRSHLSTAGST1000, RHD4CZ1C081ST1200, RHD4CZ1C081ST1301, RHD4PRSHLDOSST1600, RHD4PRSHLPOST1000, RHD4PRSHLDOSST1000 |
| RHD4CZ1C081ST1400 |  | Primary Test for GRP Pipe Line 400 mm - (RD-C-8 /1)-Z1-C081-ST | 4d | 2026-09-28 | 2026-10-01 | RHD4CZ1C081ST1300, RHD4CZ1C081ST1401 |
| RHD4CZ1C081ST1500 |  | Backfilling and warning tape works for GRP Pipe Line 400 mm - (RD-C-8 /1)-Z1-C081-ST | 4d | 2026-10-03 | 2026-10-06 | RHD4CZ1C081ST1400, RHD4CZ1C081ST1501 |
|  | 345 | **RHD4-02-002-C081-(ST)-UPVC Pipes - 400 mm diameter** |  |  |  |  |
|  | 344 | **RHD4-02-002-C081-(ST)-UPVC Pipes - 300 mm diameter** |  | 2026-10-07 | 2026-10-26 |  |
| RHD4CZ1C081ST2100 |  | Excavation works for UPVC Pipe Line 300 mm - (RD-C-8 /1)-Z1-C081-ST | 4d | 2026-10-07 | 2026-10-11 | RHD4ENSDZ1APPST110, RHD4CZ1C081ST1500, RHD4CZ1C081ST3300, RHD4CZ1C081ST3301, RHD4CZ1C081ST1100 |
| RHD4CZ1C081ST2200 |  | Bedding works for UPVC Pipe Line 300 mm - (RD-C-8 /1)-Z1-C081-ST | 3d | 2026-10-12 | 2026-10-14 | RHD4CZ1C081ST2100 |
| RHD4CZ1C081ST2300 |  | Installing for UPVC Pipe Line 300 mm - (RD-C-8 /1)-Z1-C081-ST | 4d | 2026-10-15 | 2026-10-19 | RHD4PRSHLDOSST1100, RHD4PRSHLSTAGST1100, RHD4CZ1C081ST2200 |
| RHD4CZ1C081ST2400 |  | Primary Test for UPVC Pipe Line 300 mm - (RD-C-8 /1)-Z1-C081-ST | 2d | 2026-10-20 | 2026-10-21 | RHD4CZ1C081ST2300 |
| RHD4CZ1C081ST2500 |  | Backfilling and warning tape works for UPVC Pipe Line 300 mm - (RD-C-8 /1)-Z1-C081-ST | 4d | 2026-10-22 | 2026-10-26 | RHD4CZ1C081ST2400, RHD4CZ1C081ST6100 |
|  | 352 | **RHD4-02-002-C081-(ST)-Concrete Encasement** |  | 2026-10-18 | 2026-10-19 |  |
| RHD4CZ1C081ST6100 |  | Pipe Encasement for Storm Pipelines - (RD-C-8 /1)-Z1-C081-ST | 2d | 2026-10-18 | 2026-10-19 | RHD4CZ1C081ST2300 SS, RHD4CZ1C081ST2300 FF, RHD4CZ1C081ST2200, RHD4CZ1C081RD3100 |
|  | 353 | **RHD4-02-002-Z1-C081-Catch Basin - ST** |  | 2026-09-03 | 2026-09-16 |  |
|  | 354 | **RHD4-02-002-C081-(ST)-Single Catch Basin Works** |  | 2026-09-03 | 2026-09-14 |  |
| RHD4CZ1C081ST7100 |  | Excavation works for Single Catch Basin - (RD-C-8 /1)-Z1-C081-ST | 2d | 2026-09-03 | 2026-09-05 | RHD4ENSDZ1APPST110, RHD4CZ1C081ST1504 |
| RHD4CZ1C081ST7200 |  | PC Blinding, Installation and Pipe connection for Single Catch Basin - (RD-C-8 /1)-Z1-C081-ST | 2d | 2026-09-06 | 2026-09-07 | RHD4CZ1C081ST7100 |
| RHD4CZ1C081ST7300 |  | Rings & C.Slab & Final Backfill for Single Catch Basin - (RD-C-8 /1)-Z1-C081-ST | 2d | 2026-09-08 | 2026-09-09 | RHD4PRSHLDOSST1300, RHD4PRSHLSTAGST1300, RHD4CZ1C081ST7200 |
| RHD4CZ1C081ST7400 |  | Steel Cover for Single Catch Basin - (RD-C-8 /1)-Z1-C081-ST | 2d | 2026-09-10 | 2026-09-12 | RHD4PRSHLDOSST1700, RHD4CZ1C081ST7300 |
| RHD4CZ1C081ST7500 |  | Finishing and Insulation works for Single Catch Basin - (RD-C-8 /1)-Z1-C081-ST | 2d | 2026-09-13 | 2026-09-14 | RHD4CZ1C081ST7400 |
|  | 355 | **RHD4-02-002-C081-(ST)-Double Catch Basin Works** |  | 2026-09-03 | 2026-09-16 |  |
| RHD4CZ1C081ST8100 |  | Excavation works for Double Catch Basin - (RD-C-8 /1)-Z1-C081-ST | 2d | 2026-09-03 | 2026-09-05 | RHD4ENSDZ1APPST110, RHD4CZ1C081ST1504 |
| RHD4CZ1C081ST8200 |  | PC Blinding, Installation and Pipe connection for Double Catch Basin - (RD-C-8 /1)-Z1-C081-ST | 2d | 2026-09-08 | 2026-09-09 | RHD4CZ1C081ST8100, RHD4CZ1C081ST7200 |
| RHD4CZ1C081ST8300 |  | Rings & C.Slab & Final Backfillfor Double Catch Basin - (RD-C-8 /1)-Z1-C081-ST | 2d | 2026-09-10 | 2026-09-12 | RHD4PRSHLDOSST1300, RHD4PRSHLSTAGST1300, RHD4CZ1C081ST8200, RHD4CZ1C081ST7300 |
| RHD4CZ1C081ST8400 |  | Steel Cover for Double Catch Basin - (RD-C-8 /1)-Z1-C081-ST | 2d | 2026-09-13 | 2026-09-14 | RHD4PRSHLDOSST1700, RHD4CZ1C081ST8300, RHD4CZ1C081ST7400 |
| RHD4CZ1C081ST8500 |  | Finishing and Insulation works for Double Catch Basin - (RD-C-8 /1)-Z1-C081-ST | 2d | 2026-09-15 | 2026-09-16 | RHD4CZ1C081ST8400, RHD4CZ1C081ST7500 |
|  | 378 | **RHD4-02-002-Z1-C081-Sewage Network - SW** |  | 2026-10-20 | 2026-11-17 |  |
|  | 388 | **RHD4-02-002-C081-(SW)-MH Works - 1200 mm diameter** |  | 2026-10-20 | 2026-11-12 |  |
| RHD4CZ1C081SW3100 |  | Excavation and PC Blinding works for MH 1200 mm - (RD-C-8 /1)-Z1-C081-SW | 4d | 2026-10-20 | 2026-10-24 | RHD4ENSDZ1APPSW120, RHD4CZ1C081ST6100, RHD4CZ1C081ST8500, RHD4CZ1C081ST7500, RHD4CZ1C081ST8100, RHD4CZ1C081ST1500 |
| RHD4CZ1C081SW3200 |  | Installation of Base for MH 1200 mm - (RD-C-8 /1)-Z1-C081-SW | 5d | 2026-10-25 | 2026-10-29 | RHD4CZ1C081SW3100 |
| RHD4CZ1C081SW3300 |  | MH Ring and C.Slab works and Backfilling works for MH 1200 mm - (RD-C-8 /1)-Z1-C081-SW | 5d | 2026-10-31 | 2026-11-04 | RHD4PRSHLDOSSW1300, RHD4CZ1C081ST2500, RHD4PRSHLSTAGSW1300, RHD4CZ1C081SW3200 |
| RHD4CZ1C081SW3400 |  | Steel Cover for MH 1200 mm - (RD-C-8 /1)-Z1-C081-SW | 2d | 2026-11-05 | 2026-11-07 | RHD4PRSHLDOSSW1400, RHD4CZ1C081ST3501, RHD4PRSHLSTAGSW1400, RHD4CZ1C081SW3300 |
| RHD4CZ1C081SW3500 |  | Finishing, Benching, Testing works for MH 1200 mm - (RD-C-8 /1)-Z1-C081-SW | 5d | 2026-11-08 | 2026-11-12 | RHD4CZ1C081SW3400 |
|  | 384 | **RHD4-02-002-C081-(SW)-UPVC Pipes - 200 mm diameter** |  | 2026-10-25 | 2026-11-17 |  |
| RHD4CZ1C081SW2100 |  | Excavation works for UPVC Pipe Line 200 mm - (RD-C-8 /1)-Z1-C081-SW | 4d | 2026-10-25 | 2026-10-28 | RHD4ENSDZ1APPSW120, RHD4CZ1C081SW3100, RHD4CZ1C081SW3100 SS |
| RHD4CZ1C081SW2200 |  | Bedding works for UPVC Pipe Line 200 mm - (RD-C-8 /1)-Z1-C081-SW | 4d | 2026-10-29 | 2026-11-02 | RHD4CZ1C081SW2100, RHD4CZ1C081SW3100, RHD4CZ1C081SW3100 SS |
| RHD4CZ1C081SW2300 |  | Installing for UPVC Pipe Line 200 mm - (RD-C-8 /1)-Z1-C081-SW | 4d | 2026-11-05 | 2026-11-09 | RHD4PRSHLDOSSW1000, RHD4PRSHLSTAGSW1000, RHD4CZ1C081SW2200, RHD4CZ1C081SW3300, RHD4CZ1C081SW3300 SS |
| RHD4CZ1C081SW2400 |  | Primary Test for UPVC Pipe Line 200 mm - (RD-C-8 /1)-Z1-C081-SW | 3d | 2026-11-10 | 2026-11-12 | RHD4CZ1C081SW2300 |
| RHD4CZ1C081SW2500 |  | Backfilling and warning tape works for UPVC Pipe Line 200 mm - (RD-C-8 /1)-Z1-C081-SW | 4d | 2026-11-14 | 2026-11-17 | RHD4CZ1C081SW2400 |
|  | 387 | **RHD4-02-002-C081-(SW)-Concrete Encasement** |  |  |  |  |
|  | 415 | **RHD4-02-002-Z1-C081-Potable Network - PT** |  | 2026-11-18 | 2027-02-23 |  |
|  | 418 | **RHD4-02-002-C081-(PT)-HDPE Pipes - 200 mm diameter** |  | 2026-11-18 | 2026-12-22 |  |
| RHD4CZ1C081PT1102 |  | Excavation works for HDPE Pipline 200 mm - (RD-C-8 /1)-Z1-C081-PT | 6d | 2026-11-18 | 2026-11-24 | RHD4ENSDZ1APPPT130, RHD4ENMSPT2000, RHD4CZ1C081SW2500 |
| RHD4CZ1C081PT1202 |  | Bedding works for HDPE Pipline 200 mm - (RD-C-8 /1)-Z1-C081-PT | 5d | 2026-11-25 | 2026-11-30 | RHD4CZ1C081PT1102 |
| RHD4CZ1C081PT1302 |  | Installing for HDPE Pipline 200 mm - (RD-C-8 /1)-Z1-C081-PT | 9d | 2026-12-01 | 2026-12-10 | RHD4PRSHLDOSPT1000, RHD4PRSHLSTAGPT1000, RHD4CZ1C081PT1202 |
| RHD4CZ1C081PT1402 |  | Primary Test for HDPE Pipline 200 mm - (RD-C-8 /1)-Z1-C081-PT | 3d | 2026-12-12 | 2026-12-14 | RHD4CZ1C081PT1302 |
| RHD4CZ1C081PT1502 |  | Backfilling and warning tape works for HDPE Pipline 200 mm - (RD-C-8 /1)-Z1-C081-PT | 7d | 2026-12-15 | 2026-12-22 | RHD4CZ1C081PT1402 |
|  | 417 | **RHD4-02-002-C081-(PT)-HDPE Pipes - 160 mm diameter** |  |  |  |  |
|  | 6848 | **RHD4-02-002-C081-(PT)-HDPE Pipes - 110 mm diameter** |  | 2026-12-23 | 2027-01-07 |  |
| RHD4CZ1C081PT1100 |  | Excavation works for HDPE Pipline 110 mm - (RD-C-8 /1)-Z1-C081-PT | 3d | 2026-12-23 | 2026-12-26 | RHD4CZ1C081PT1102, RHD4CZ1C081PT1502 |
| RHD4CZ1C081PT1200 |  | Bedding works for HDPE Pipline 110 mm - (RD-C-8 /1)-Z1-C081-PT | 2d | 2026-12-27 | 2026-12-28 | RHD4CZ1C081PT1100 |
| RHD4CZ1C081PT1300 |  | Installing for HDPE Pipline 110 mm - (RD-C-8 /1)-Z1-C081-PT | 4d | 2026-12-29 | 2027-01-02 | RHD4CZ1C081PT1200 |

| ID | WBS | Task | Duration | Start | Finish | Predecessors |
| --- | --- | --- | --- | --- | --- | --- |
| RHD4CZ1C081PT1400 |  | Primary Test for HDPE Pipline 110 mm - (RD-C-8 /1)-Z1-C081-PT | 2d | 2027-01-03 | 2027-01-04 | RHD4CZ1C081PT1300 |
| RHD4CZ1C081PT1500 |  | Backfilling and warning tape works for HDPE Pipline 110 mm - (RD-C-8 /1)-Z1-C081-PT | 3d | 2027-01-05 | 2027-01-07 | RHD4CZ1C081PT1400 |
|  | 421 | **RHD4-02-002-C081-(PT)-Gate Valves (Direct Buried)** |  | 2027-01-09 | 2027-01-12 |  |
| RHD4CZ1C081PT3100 |  | Installation for Direct Buried Gate Valves - (RD-C-8 /1)-Z1-C081-PT | 2d | 2027-01-09 | 2027-01-10 | RHD4PRSHLDOSPT1200, RHD4PRSHLSTAGPT1200, RHD4CZ1C081PT1500 |
| RHD4CZ1C081PT3200 |  | Stem and Service box for Direct Buried Gate Valves - (RD-C-8 /1)-Z1-C081-PT | 2d | 2027-01-11 | 2027-01-12 | RHD4PRSHLDOSPT1300, RHD4PRSHLSTAGPT1300, RHD4CZ1C081PT3100, RHD4CZ1C081PT1502 |
|  | 429 | **RHD4-02-002-C081-(PT)-Concrete Encasement** |  |  |  |  |
|  | 426 | **RHD4-02-002-C081-(PT)-Air Valve Chambers** |  | 2026-12-27 | 2027-01-04 |  |
| RHD4CZ1C081PT2102 |  | Excavation and Bedding for Air Valve Chambers for Potable Water Network - (RD-C-8 /1)-Z1-C081-PT | 2d | 2026-12-27 | 2026-12-28 | RHD4ENSDZ1APPPT130, RHD4CZ1C081PT1100, RHD4CZ1C081PT1100 FF |
| RHD4CZ1C081PT2202 |  | PC works for Air Valve Chambers for Potable Water Network - (RD-C-8 /1)-Z1-C081-PT | 2d | 2026-12-29 | 2026-12-30 | RHD4CZ1C081PT2102 |
| RHD4CZ1C081PT2302 |  | Installation for Air Valve Chambers for Potable Water Network - (RD-C-8 /1)-Z1-C081-PT | 2d | 2026-12-31 | 2027-01-02 | RHD4PRSHLDOSPT1100, RHD4PRSHLDOSPT1400, RHD4PRSHLSTAGPT1100, RHD4PRSHLSTAGPT1400, RHD4CZ1C081PT2202 |
| RHD4CZ1C081PT2402 |  | Backfilling works for Air Valve Chambers for Potable Water Network - (RD-C-8 /1)-Z1-C081-PT | 2d | 2027-01-03 | 2027-01-04 | RHD4CZ1C081PT2302 |
|  | 427 | **RHD4-02-002-C081-(PT)-Air Valves** |  | 2026-12-31 | 2027-01-06 |  |
| RHD4CZ1C081PT3103 |  | Installation for Air Valves for Potable Water Network - (RD-C-8 /1)-Z1-C081-PT | 2d | 2026-12-31 | 2027-01-02 | RHD4PRSHLDOSPT1200, RHD4PRSHLSTAGPT1200, RHD4CZ1C081PT2202 |
| RHD4CZ1C081PT3203 |  | Stem and Service box for Air Valves for Potable Water Network - (RD-C-8 /1)-Z1-C081-PT | 2d | 2027-01-05 | 2027-01-06 | RHD4PRSHLDOSPT1300, RHD4PRSHLSTAGPT1300, RHD4CZ1C081PT3103, RHD4CZ1C081PT2402 |
|  | 428 | **RHD4-02-002-C081-(PT)-Fire Hydrant** |  | 2027-01-07 | 2027-02-23 |  |
| RHD4CZ1C081PT4100 |  | Excavation and Bedding and Pipe Installation for Fire Hydrant - (RD-C-8 /1)-Z1-C081-PT | 4d | 2027-01-07 | 2027-01-11 | RHD4ENSDZ1APPPT130, RHD4CZ1C081PT2102, RHD4CZ1C081PT3203 |
| RHD4CZ1C081PT4200 |  | Valve Installation for Fire Hydrant - (RD-C-8 /1)-Z1-C081-PT | 3d | 2027-02-07 | 2027-02-09 | RHD4CZ1C081PT1500, RHD4CZ1C081PT3200, RHD4PRSHLDOSICT1000, RHD4PRSHLSTAGICT1000, RHD4CZ1C081PT4100, RHD4CZ1L101IRR3200, RHD4CZ7L131ST3501 |
| RHD4CZ1C081PT4300 |  | Stem for Fire Hydrant - (RD-C-8 /1)-Z1-C081-PT | 3d | 2027-02-10 | 2027-02-13 | RHD4CZ6C062ICT3400, RHD4CZ1C081PT4200 |
| RHD4CZ1C081PT4400 |  | Fire Installation for Fire Hydrant - (RD-C-8 /1)-Z1-C081-PT | 3d | 2027-02-14 | 2027-02-16 | RHD4PRSHLDOSPT1500, RHD4PRSHLSTAGPT1500, RHD4CZ1C081PT4300, RHD4CZ9L02IRR2401 |
| RHD4CZ1C081PT4500 |  | Protection Barriers for Fire Hydrant - (RD-C-8 /1)-Z1-C081-PT | 5d | 2027-02-17 | 2027-02-23 | RHD4CZ1C081PT4400, RHD4CZ4C012IRR3201, RHD4CZ4A013TC2400 |
|  | 430 | **RHD4-02-002-Z1-C081-Irrigation Network - IRR** |  | 2026-11-25 | 2026-12-20 |  |
|  | 437 | **RHD4-02-002-C081-(IRR)-HDPE Pipes - 450 mm diameter** |  |  |  |  |
|  | 6863 | **RHD4-02-002-C081-(IRR)-HDPE Pipes - 160 mm diameter** |  | 2026-11-25 | 2026-12-06 |  |
| RHD4CZ1C081IRR1100 |  | Excavation works for HDPE Pipline 160 mm - (RD-C-8 /1)-Z1-C081-IRR | 2d | 2026-11-25 | 2026-11-26 | RHD4ENSDZ1APPIRR140, RHD4ENMSRR2000, RHD4CZ1C081PT1102 |
| RHD4CZ1C081IRR1200 |  | Bedding works for HDPE Pipline 160 mm - (RD-C-8 /1)-Z1-C081-IRR | 2d | 2026-11-28 | 2026-11-29 | RHD4CZ1C081IRR1100 |
| RHD4CZ1C081IRR1300 |  | Installing for HDPE Pipline 160 mm - (RD-C-8 /1)-Z1-C081-IRR | 2d | 2026-11-30 | 2026-12-01 | RHD4CZ1C081IRR1200 |
| RHD4CZ1C081IRR1400 |  | Primary Test for HDPE Pipline 160 mm - (RD-C-8 /1)-Z1-C081-IRR | 2d | 2026-12-02 | 2026-12-03 | RHD4CZ1C081IRR1300 |
| RHD4CZ1C081IRR1500 |  | Backfilling and warning tape works for HDPE Pipline 160 mm - (RD-C-8 /1)-Z1-C081-IRR | 2d | 2026-12-05 | 2026-12-06 | RHD4CZ1C081IRR1400 |
|  | 6876 | **RHD4-02-002-C081-(IRR)-Air Valve Chamber** |  | 2026-12-07 | 2026-12-15 |  |
| RHD4CZ1C081IRR2102 |  | Excavation and Bedding for Valve Chamber for Irrigation Network - (RD-C-8 /1)-Z1-C081-IRR | 2d | 2026-12-07 | 2026-12-08 | RHD4CZ1C081IRR1100, RHD4CZ1C081IRR1500 |
| RHD4CZ1C081IRR2202 |  | PC works for Valve Chamber for Irrigation Network - (RD-C-8 /1)-Z1-C081-IRR | 2d | 2026-12-09 | 2026-12-10 | RHD4CZ1C081IRR2102 |
| RHD4CZ1C081IRR2302 |  | Installation for Valve Chamber for Irrigation Network - (RD-C-8 /1)-Z1-C081-IRR | 2d | 2026-12-12 | 2026-12-13 | RHD4CZ1C081IRR2202 |
| RHD4CZ1C081IRR2402 |  | Backfilling works for Valve Chamber for Irrigation Network - (RD-C-8 /1)-Z1-C081-IRR | 2d | 2026-12-14 | 2026-12-15 | RHD4CZ1C081IRR2302 |
|  | 6877 | **RHD4-02-002-C081-(IRR)-Air Valves** |  | 2026-12-16 | 2026-12-20 |  |
| RHD4CZ1C081IRR3103 |  | Installation for Air Valves for Irrigation Network - (RD-C-8 /1)-Z1-C081-IRR | 2d | 2026-12-16 | 2026-12-17 | RHD4CZ1C081IRR2302, RHD4CZ1C081IRR2402 |
| RHD4CZ1C081IRR3203 |  | Stem and Service box for Air Valves for Irrigation Network - (RD-C-8 /1)-Z1-C081-IRR | 2d | 2026-12-19 | 2026-12-20 | RHD4CZ1C081IRR3103, RHD4CZ1C081IRR2402 |
|  | 436 | **RHD4-02-002-C081-(IRR)-HDPE Pipes - 400 mm diameter** |  |  |  |  |
|  | 435 | **RHD4-02-002-C081-(IRR)-HDPE Pipes - 315 mm diameter** |  | 2026-11-25 | 2026-12-17 |  |
| RHD4CZ1C081IRR1104 |  | Excavation works for HDPE Pipline 315 mm - (RD-C-8 /1)-Z1-C081-IRR | 5d | 2026-11-25 | 2026-11-30 | RHD4ENSDZ1APPIRR140, RHD4ENMSRR2000, RHD4CZ1C081PT1102 |
| RHD4CZ1C081IRR1204 |  | Bedding works for HDPE Pipline 315 mm - (RD-C-8 /1)-Z1-C081-IRR | 4d | 2026-12-01 | 2026-12-05 | RHD4CZ1C081IRR1104 |
| RHD4CZ1C081IRR1304 |  | Installing for HDPE Pipline 315 mm - (RD-C-8 /1)-Z1-C081-IRR | 5d | 2026-12-06 | 2026-12-10 | RHD4PRSHLDOSIRR1000, RHD4PRSHLSTAGIRR1000, RHD4CZ1C081IRR1204 |
| RHD4CZ1C081IRR1404 |  | Primary Test for HDPE Pipline 315 mm - (RD-C-8 /1)-Z1-C081-IRR | 2d | 2026-12-12 | 2026-12-13 | RHD4CZ1C081IRR1304 |
| RHD4CZ1C081IRR1504 |  | Backfilling and warning tape works for HDPE Pipline 315 mm - (RD-C-8 /1)-Z1-C081-IRR | 4d | 2026-12-14 | 2026-12-17 | RHD4CZ1C081IRR1404 |
|  | 433 | **RHD4-02-002-C081-(IRR)-HDPE Pipes - 200 mm diameter** |  |  |  |  |
|  | 439 | **RHD4-02-002-C081-(IRR)-Gate Valves (Direct Buried)** |  | 2026-12-12 | 2026-12-15 |  |
| RHD4CZ1C081IRR3100 |  | Installation for Direct Buried Gate Valves - (RD-C-8 /1)-Z1-C081-IRR | 2d | 2026-12-12 | 2026-12-13 | RHD4PRSHLDOSIRR1100, RHD4PRSHLSTAGIRR1100, RHD4CZ1C081IRR1304 SS, RHD4CZ1C081IRR1304 FF, RHD4CZ1C081IRR1304, RHD4CZ1C081IRR1204, RHD4CZ1C081IRR1204 FF, RHD4CZ1C081IRR1104, RHD4CZ1C081IRR1104 FF |
| RHD4CZ1C081IRR3200 |  | Stem and Service box for Direct Buried Gate Valves - (RD-C-8 /1)-Z1-C081-IRR | 2d | 2026-12-14 | 2026-12-15 | RHD4PRSHLDOSIRR1300, RHD4PRSHLSTAGIRR1300, RHD4CZ1C081IRR3100, RHD4CZ1C081IRR1204, RHD4CZ1C081IRR1104 |
|  | 446 | **RHD4-02-002-C081-(IRR)-Concrete Encasement** |  |  |  |  |
|  | 464 | **RHD4-02-002-Z1-C081-Medium Voltage Network - MV** |  | 2027-01-07 | 2027-02-09 |  |
|  | 465 | **RHD4-02-002-C081-(MV)-Medium Voltage cable trench** |  | 2027-01-07 | 2027-02-01 |  |
| RHD4CZ1C081MV1100 |  | Excavation for Medium Voltage Trench - (RD-C-8 /1)-Z1-C081-MV | 6d | 2027-01-07 | 2027-01-13 | RHD4ENSDZ1APPMV150, RHD4CZ1C081RD3100, RHD4CZ1L101MV3300 |
| RHD4CZ1C081MV1200 |  | Trench Backfilling for Medium Voltage Network - (RD-C-8 /1)-Z1-C081-MV | 6d | 2027-01-26 | 2027-02-01 | RHD4CZ1C081MV3200 |
|  | 467 | **RHD4-02-002-C081-(MV)-Medium Voltage cables 3Cx 500 mm²** |  | 2027-01-14 | 2027-02-07 |  |
| RHD4CZ1C081MV3100 |  | Installation of Medium Voltage Cables 3Cx 500 mm² - (RD-C-8 /1)-Z1-C081-MV | 8d | 2027-01-14 | 2027-01-23 | RHD4PRSHLDOSMV1100, RHD4ENMSMV2000, RHD4ENMSMV2010, RHD4PRSHLSTAGMV1100, RHD4CZ1C081MV1100, RHD4CZ1C081MV1100 SS |
| RHD4CZ1C081MV3200 |  | Joints Installation of Medium Voltage Cables 3Cx 500 mm² - (RD-C-8 /1)-Z1-C081-MV | 2d | 2027-01-24 | 2027-01-25 | RHD4PRSHLDOSMV1300, RHD4PRSHLSTAGMV1300, RHD4CZ1C081MV3100 |
| RHD4CZ1C081MV3300 |  | Testing of Medium Voltage Cables 3Cx 500 mm² - (RD-C-8 /1)-Z1-C081-MV | 3d | 2027-02-02 | 2027-02-04 | RHD4CZ1C081MV3200, RHD4CZ1C081MV1200, RHD4CZ1C081MV3100 |
| RHD4CZ1C081MV3400 |  | Termination of Medium Voltage Cables 3Cx 500 mm² - (RD-C-8 /1)-Z1-C081-MV | 2d | 2027-02-06 | 2027-02-07 | RHD4CZ1C081MV3300 |
|  | 468 | **RHD4-02-002-C081-(MV)-Medium Voltage cables 3Cx 50 mm²** |  | 2027-02-08 | 2027-02-09 |  |
| RHD4CZ1C081MV3401 |  | Termination of Medium Voltage Cables 3Cx 50 mm² - (RD-C-8 /1)-Z1-C081-MV | 2d | 2027-02-08 | 2027-02-09 | RHD4CZ1C081MV3400 |
|  | 470 | **RHD4-02-002-C081-(MV)-Unit Substations** |  |  |  |  |
|  | 5388 | **RHD4-02-002-C081-(MV)-Normally open Point (Outdoor Type)** |  | 2027-02-02 | 2027-02-06 |  |
| RHD4CZ1C081MV4100 |  | Installation for Normally open Point - (RD-C-8 /1)-Z1-C081-MV | 2d | 2027-02-02 | 2027-02-03 | RHD4CZ1C081MV1200 |
| RHD4CZ1C081MV4200 |  | Termination for Normally open Point - (RD-C-8 /1)-Z1-C081-MV | 2d | 2027-02-04 | 2027-02-06 | RHD4CZ1C081MV4100 |
|  | 471 | **RHD4-02-002-Z1-C081-Low Voltage Network - LV** |  | 2026-12-19 | 2027-01-21 |  |
|  | 472 | **RHD4-02-002-C081-(LV)-Low Voltage duct banks** |  | 2026-12-19 | 2026-12-31 |  |
| RHD4CZ1C081LV2100 |  | Excavation of Duct Banks for Low Voltage Network - (RD-C-8 /1)-Z1-C081-LV | 3d | 2026-12-19 | 2026-12-21 | RHD4ENSDZ1APPLV160, RHD4CZ1C081IRR1504 |
| RHD4CZ1C081LV2200 |  | Installation of Duct Banks for Low Voltage Network - (RD-C-8 /1)-Z1-C081-LV | 4d | 2026-12-22 | 2026-12-26 | RHD4PRSHLDOSLV1000, RHD4PRSHLSTAGLV1000, RHD4CZ1C081LV2100 |
| RHD4CZ1C081LV2300 |  | Pouring of Duct Banks for Low Voltage Network - (RD-C-8 /1)-Z1-C081-LV | 3d | 2026-12-27 | 2026-12-29 | RHD4CZ1C081LV2200 |
| RHD4CZ1C081LV2400 |  | Backfilling of Duct Banks for Low Voltage Network - (RD-C-8 /1)-Z1-C081-LV | 2d | 2026-12-30 | 2026-12-31 | RHD4CZ1C081LV2300 |
|  | 473 | **RHD4-02-002-C081-(LV)-Low Voltage Drawpit** |  | 2026-12-30 | 2027-01-03 |  |

| ID | WBS | Task | Duration | Start | Finish | Predecessors |
| --- | --- | --- | --- | --- | --- | --- |
| RHD4CZ1C081LV5100 |  | Excavation of Drawpit size 900x900x1000mm for Low Voltage Network - (RD-C-8 /1)-Z1-C081-LV | 2d | 2026-12-30 | 2026-12-31 | RHD4ENSDZ1APPLV160, RHD4CZ1C081LV2300 |
| RHD4CZ1C081LV5200 |  | Installation of Drawpit size 900x900x1000mm for Low Voltage Network - (RD-C-8 /1)-Z1-C081-LV | 2d | 2027-01-02 | 2027-01-03 | RHD4PRSHLDOSLV1400, RHD4PRSHLSTAGLV1400, RHD4CZ1C081LV5100 |
|  | 474 | **RHD4-02-002-C081-(LV)-Low Voltage cables** |  | 2027-01-04 | 2027-01-21 |  |
| RHD4CZ1C081LV3100 |  | Excavation for Low Voltage Cables for Low Voltage Network - (RD-C-8 /1)-Z1-C081-LV | 5d | 2027-01-04 | 2027-01-09 | RHD4ENSDZ1APPLV160, RHD4CZ1C081LV2400, RHD4CZ1C081PT1502, RHD4CZ1C081IRR1504, RHD4CZ1C081SW2500, RHD4CZ1C081SW3300, RHD4CZ1C081SW3300 SS, RHD4CZ1C081SW3200 SS, RHD4CZ1C081SW3100 SS, RHD4CZ1C081SW3100, RHD4CZ1C081PT1102, RHD4CZ1C081IRR1404, RHD4CZ1C081IRR1304, RHD4CZ1C081IRR1204, RHD4CZ1C081IRR1104, RHD4CZ1C081LV5200 |
| RHD4CZ1C081LV3200 |  | Cable Laying of Low Voltage Cables for Low Voltage Network - (RD-C-8 /1)-Z1-C081-LV | 4d | 2027-01-10 | 2027-01-13 | RHD4PRSHLDOSLV1100, RHD4ENMSLV2000, RHD4ENMSLV2010, RHD4PRSHLSTAGLV1100, RHD4CZ1C081LV3100 |
| RHD4CZ1C081LV3300 |  | Warning tape and Backfill for Low Voltage Cables for Low Voltage Network - (RD-C-8 /1)-Z1-C081-LV | 4d | 2027-01-14 | 2027-01-18 | RHD4CZ1C081LV3200 |
| RHD4CZ1C081LV3400 |  | Testing of Low Voltage Cables for Low Voltage Network - (RD-C-8 /1)-Z1-C081-LV | 3d | 2027-01-19 | 2027-01-21 | RHD4CZ1C081LV3300 |
|  | 475 | **RHD4-02-002-C081-(LV)-Low Voltage Distribution Pillars** |  |  |  |  |
|  | 476 | **RHD4-02-002-C081-(LV)-Low Voltage Distribution Pillars Earthing** |  |  |  |  |
|  | 477 | **RHD4-02-002-Z1-C081-Street Lighting Network - SL** |  | 2027-01-04 | 2027-03-25 |  |
|  | 478 | **RHD4-02-002-C081-(SL)-Street Lighting duct banks** |  | 2027-01-04 | 2027-01-23 |  |
| RHD4CZ1C081SL2100 |  | Excavation of Duct Banks for Street Lighting Network - (RD-C-8 /1)-Z1-C081-SL | 4d | 2027-01-04 | 2027-01-07 | RHD4ENSDZ1APPSL170, RHD4CZ1C081LV5200, RHD4CZ1C081LV2100, RHD4CZ1C081IRR1504 |
| RHD4CZ1C081SL2200 |  | Installation of Duct Banks for Street Lighting Network - (RD-C-8 /1)-Z1-C081-SL | 6d | 2027-01-09 | 2027-01-14 | RHD4PRSHLDOSSL1000, RHD4PRSHLSTAGSL1000, RHD4CZ1C081SL2100, RHD4CZ1C081LV2200 |
| RHD4CZ1C081SL2300 |  | Pouring of Duct Banks for Street Lighting Network - (RD-C-8 /1)-Z1-C081-SL | 4d | 2027-01-16 | 2027-01-19 | RHD4CZ1C081SL2200, RHD4CZ1C081LV2300 |
| RHD4CZ1C081SL2400 |  | Backfilling of Duct Banks for Street Lighting Network - (RD-C-8 /1)-Z1-C081-SL | 3d | 2027-01-20 | 2027-01-23 | RHD4CZ1C081SL2300 |
|  | 479 | **RHD4-02-002-C081-(SL)-Street Lighting Drawpit** |  | 2027-01-28 | 2027-02-01 |  |
| RHD4CZ1C081SL5100 |  | Excavation of Drawpit size 600x600x900mm for Street Lighting Network - (RD-C-8 /1)-Z1-C081-SL | 2d | 2027-01-28 | 2027-01-30 | RHD4ENSDZ1APPSL170, RHD4CZ1C081SL2300, RHD4CZ1C081SL1100 |
| RHD4CZ1C081SL5200 |  | Installation of Drawpit size 600x600x900mm for Street Lighting Network - (RD-C-8 /1)-Z1-C081-SL | 2d | 2027-01-31 | 2027-02-01 | RHD4PRSHLDOSSL1400, RHD4PRSHLSTAGSL1400, RHD4CZ1C081SL5100 |
|  | 480 | **RHD4-02-002-C081-(SL)-Street Lighting cables** |  | 2027-02-07 | 2027-03-13 |  |
| RHD4CZ1C081SL3100 |  | Excavation for Street Lighting Cables for Street Lighting Network - (RD-C-8 /1)-Z1-C081-SL | 8d | 2027-02-07 | 2027-02-15 | RHD4ENSDZ1APPSL170, RHD4CZ1C081SL1300 |
| RHD4CZ1C081SL3200 |  | Cable Laying of Street Lighting Cables for Street Lighting Network - (RD-C-8 /1)-Z1-C081-SL | 7d | 2027-02-16 | 2027-02-24 | RHD4PRSHLDOSSL1100, RHD4ENMSSL2000, RHD4ENMSSL2010, RHD4PRSHLSTAGSL1100, RHD4CZ1C081SL3100 |
| RHD4CZ1C081SL3300 |  | Warning tape and Backfill for Street Lighting Cables for Street Lighting Network - (RD-C-8 /1)-Z1-C081-SL | 7d | 2027-02-25 | 2027-03-04 | RHD4CZ1C081SL3200 |
| RHD4CZ1C081SL3400 |  | Testing of Street Lighting Cables for Street Lighting Network - (RD-C-8 /1)-Z1-C081-SL | 4d | 2027-03-06 | 2027-03-13 | RHD4CZ7L131SW1501, RHD4CZ1C081SL3300, RHD4CZ1C081LV3400 |
|  | 481 | **RHD4-02-002-C081-(SL)-Street Lighting Poles** |  | 2027-01-24 | 2027-03-25 |  |
| RHD4CZ1C081SL1100 |  | Excavation for RC Base for Lighting Poles for Street Lighting Network - (RD-C-8 /1)-Z1-C081-SL | 4d | 2027-01-24 | 2027-01-27 | RHD4ENSDZ1APPSL170, RHD4CZ1C081SL2400, RHD4CZ1C081PT1502, RHD4CZ1C081IRR1504, RHD4CZ1C081SW2500, RHD4CZ1C081SW3300, RHD4CZ1C081SW3300 SS, RHD4CZ1C081SW3200 SS, RHD4CZ1C081SW3100 SS, RHD4CZ1C081SW3100, RHD4CZ1C081PT1102, RHD4CZ1C081IRR1404, RHD4CZ1C081IRR1304, RHD4CZ1C081IRR1204, RHD4CZ1C081IRR1104 |
| RHD4CZ1C081SL1200 |  | Installation for RC Base for Lighting Poles for Street Lighting Network - (RD-C-8 /1)-Z1-C081-SL | 4d | 2027-01-28 | 2027-02-01 | RHD4CZ1C081SL1100 |
| RHD4CZ1C081SL1300 |  | Backfill for RC Base for Lighting Poles for Street Lighting Network - (RD-C-8 /1)-Z1-C081-SL | 4d | 2027-02-02 | 2027-02-06 | RHD4CZ1C081SL1200, RHD4CZ1C081SL5200 |
| RHD4CZ1C081SL1400 |  | Installation for Lighting Poles for Street Lighting Network - (RD-C-8 /1)-Z1-C081-SL | 5d | 2027-03-14 | 2027-03-18 | RHD4PRSHLDOSSL1200, RHD4ENMSSL2000, RHD4ENMSSL2010, RHD4PRSHLSTAGSL1200, RHD4CZ1C081SL1300, RHD4CZ1C081SL3400 |
| RHD4CZ1C081SL1500 |  | Luminaire Installation for Lighting Poles for Street Lighting Network - (RD-C-8 /1)-Z1-C081-SL | 6d | 2027-03-20 | 2027-03-25 | RHD4PRSHLDOSSL1300, RHD4PRSHLSTAGSL1300, RHD4CZ1C081SL1400 |
|  | 482 | **RHD4-02-002-C081-(SL)-Street Lighting Feeder Pillars** |  | 2027-03-06 | 2027-03-21 |  |
| RHD4CZ1C081SL4100 |  | Leveling for Distribution Pillars for Street Lighting Network - (RD-C-8 /1)-Z1-C081-SL | 2d | 2027-03-06 | 2027-03-07 | RHD4CZ1C081SL3300 |
| RHD4CZ1C081SL4200 |  | Lean Concrete for Distribution Pillars for Street Lighting Network - (RD-C-8 /1)-Z1-C081-SL | 2d | 2027-03-08 | 2027-03-13 | RHD4CZ1C081SL4100 |
| RHD4CZ1C081SL4300 |  | Installation of Distribution Pillars for Street Lighting Network - (RD-C-8 /1)-Z1-C081-SL | 2d | 2027-03-20 | 2027-03-21 | RHD4CZ1C081SL4200, RHD4CZ1C081SL1400 |
|  | 483 | **RHD4-02-002-C081-(SL)-Street Lighting Earthing System** |  | 2027-03-22 | 2027-03-23 |  |
| RHD4CZ1C081SL6100 |  | Installation of Earthing for Lighting Poles and Fedder Pillers for Street Lighting Network - (RD-C-8 /1)-Z1-C081-SL | 2d | 2027-03-22 | 2027-03-23 | RHD4ENMSER2000, RHD4ENMSER2010, RHD4CZ1C081SL4300, RHD4CZ1C081MV3401 |
|  | 489 | **RHD4-02-002-Z1-C081-Telecommunications Network - TC** |  | 2026-09-03 | 2027-05-02 |  |
|  | 490 | **RHD4-02-002-C081-(TC)-Telecommunications Ducts** |  | 2027-03-24 | 2027-05-02 |  |
| RHD4CZ1C081TC2100 |  | Excavation of HDPE Ducts for Telecom Network - (RD-C-8 /1)-Z1-C081-TC | 10d | 2027-03-24 | 2027-04-04 | RHD4ENSDZ1APPTC190, RHD4CZ1C081SL3300, RHD4CZ1C081SL2400, RHD4CZ1C081SL2300, RHD4CZ1C081SL2200, RHD4CZ1C081SL2100, RHD4CZ1C081LV3300, RHD4CZ1C081SL6100 |
| RHD4CZ1C081TC2200 |  | Installation of HDPE Ducts for Telecom Network - (RD-C-8 /1)-Z1-C081-TC | 14d | 2027-04-05 | 2027-04-20 | RHD4PRSHLDOSTC1000, RHD4PRSHLSTAGTC1000, RHD4CZ1C081TC2100 |
| RHD4CZ1C081TC2400 |  | Backfilling of HDPE Ducts for Telecom Network - (RD-C-8 /1)-Z1-C081-TC | 10d | 2027-04-21 | 2027-05-02 | RHD4CZ1C081TC2200, RHD4CZ1C081TC5200 |
|  | 491 | **RHD4-02-002-C081-(TC)-Telecommunications Manholes** |  | 2027-04-05 | 2027-04-13 |  |
| RHD4CZ1C081TC5100 |  | Excavation for Manholes for Telecom Network - (RD-C-8 /1)-Z1-C081-TC | 4d | 2027-04-05 | 2027-04-08 | RHD4ENSDZ1APPTC190, RHD4CZ1C081TC2100, RHD4CZ1C081TC2100 FF |
| RHD4CZ1C081TC5200 |  | Installation of Manholes for Telecom Network - (RD-C-8 /1)-Z1-C081-TC | 4d | 2027-04-10 | 2027-04-13 | RHD4PRSHLDOSTC1200, RHD4PRSHLSTAGTC1200, RHD4CZ1C081TC5100, RHD4CZ1C081TC2200 SS |
|  | 5411 | **RHD4-02-002-C081-(TC)-Telecomminications Road Crossings** |  | 2026-09-03 | 2026-09-12 |  |
| RHD4CZ1C081TC3100 |  | Excavation for Road Crossings for Telecom Network - (RD-C-8 /1)-Z1-C081-TC | 2d | 2026-09-03 | 2026-09-05 | RHD4CZ1C081RW2000, RHD4CZ1C081ST1504 |
| RHD4CZ1C081TC3200 |  | Installation of Road Crossings for Telecom Network - (RD-C-8 /1)-Z1-C081-TC | 2d | 2026-09-06 | 2026-09-07 | RHD4CZ1C081TC3100 |
| RHD4CZ1C081TC3300 |  | Pouring of Road Crossings for Telecom Network - (RD-C-8 /1)-Z1-C081-TC | 2d | 2026-09-08 | 2026-09-09 | RHD4CZ1C081TC3200 |
| RHD4CZ1C081TC3400 |  | Backfilling of Road Crossings for Telecom Network - (RD-C-8 /1)-Z1-C081-TC | 2d | 2026-09-10 | 2026-09-12 | RHD4CZ1C081TC3300 |
|  | 493 | **RHD4-02-002-Z1-C081-Information and Communication Technologies - ICT** |  | 2027-03-06 | 2027-04-19 |  |
|  | 494 | **RHD4-02-002-C081-(ICT)-Information and Communication Technologies Ducts** |  | 2027-03-06 | 2027-04-19 |  |
| RHD4CZ1C081ICT2100 |  | Excavation of HDPE Ducts for ICT Network - (RD-C-8 /1)-Z1-C081-ICT | 10d | 2027-03-06 | 2027-03-20 | RHD4ENSDZ1APPICT200, RHD4CZ1C081SL3300, RHD4CZ1C081SL2400, RHD4CZ1C081SL2300, RHD4CZ1C081SL2200, RHD4CZ1C081SL2100, RHD4CZ1C081LV3300 |
| RHD4CZ1C081ICT2200 |  | Installation of HDPE Ducts for ICT Network - (RD-C-8 /1)-Z1-C081-ICT | 15d | 2027-03-21 | 2027-04-06 | RHD4PRSHLDOSICT1000, RHD4PRSHLSTAGICT1000, RHD4CZ1C081ICT2100 |
| RHD4CZ1C081ICT2400 |  | Backfilling of HDPE Ducts for ICT Network - (RD-C-8 /1)-Z1-C081-ICT | 5d | 2027-04-14 | 2027-04-19 | RHD4CZ1C081ICT2200, RHD4CZ1C081ICT5200 |
|  | 495 | **RHD4-02-002-C081-(ICT)-Information and Communication Technologies Manholes** |  | 2027-04-05 | 2027-04-13 |  |
| RHD4CZ1C081ICT5100 |  | Excavation for Manholes for ICT Network - (RD-C-8 /1)-Z1-C081-ICT | 4d | 2027-04-05 | 2027-04-08 | RHD4ENSDZ1APPICT200, RHD4CZ1C081ICT2100, RHD4CZ1C081TC2100 |
| RHD4CZ1C081ICT5200 |  | Installation of Manholes for ICT Network - (RD-C-8 /1)-Z1-C081-ICT | 4d | 2027-04-10 | 2027-04-13 | RHD4PRSHLDOSICT1200, RHD4PRSHLSTAGICT1200, RHD4CZ1C081ICT5100 |
|  | 484 | **RHD4-02-002-Z1-C081-Landscape Network - LS** |  |  |  |  |
|  | 485 | **RHD4-02-002-C081-(LS)-Landscape Lighting cables** |  |  |  |  |
|  | 486 | **RHD4-02-002-C081-(LS)-Landscape Feeder Pillars** |  |  |  |  |
|  | 487 | **RHD4-02-002-C081-(LS)-Landscape Bollard Poles** |  |  |  |  |
|  | 488 | **RHD4-02-002-C081-(LS)-Landscape Feeder Pillars Earthing** |  |  |  |  |
|  | 497 | **RHD4-02-002-Z1-C081-Security Network - CCTV** |  | 2027-05-03 | 2027-06-21 |  |
|  | 498 | **RHD4-02-002-C081-(CCTV)-Civil Works** |  | 2027-05-03 | 2027-05-13 |  |
| RHD4CZ1C081CCTV2100 |  | Civil Works for Security Network - (RD-C-8 /1)-Z1-C081-CCTV | 10d | 2027-05-03 | 2027-05-13 | RHD4CZ1C081ICT2400, RHD4CZ1C081TC2400, RHD4CZ1C081MV4200, RHD4CZ1C081MV3401 |
|  | 499 | **RHD4-02-002-C081-(CCTV)-CCTV Poles** |  | 2027-05-19 | 2027-05-30 |  |
| RHD4CZ1C081CCTV1100 |  | Excavation for RC Base for CCTV Poles for Security Network - (RD-C-8 /1)-Z1-C081-CCTV | 2d | 2027-05-19 | 2027-05-20 | RHD4ENSDZ1APPCCTV210, RHD4CZ1C081CCTV2100 |
| RHD4CZ1C081CCTV1200 |  | Installation for RC Base for CCTV Poles for Security Network - (RD-C-8 /1)-Z1-C081-CCTV | 2d | 2027-05-22 | 2027-05-23 | RHD4CZ1C081CCTV1100 |
| RHD4CZ1C081CCTV1300 |  | Backfill for RC Base for CCTV Poles for Security Network - (RD-C-8 /1)-Z1-C081-CCTV | 2d | 2027-05-24 | 2027-05-25 | RHD4CZ1C081CCTV1200 |
| RHD4CZ1C081CCTV1400 |  | Installation for CCTV Poles for Security Network - (RD-C-8 /1)-Z1-C081-CCTV | 2d | 2027-05-26 | 2027-05-27 | RHD4PRSHLDOSCCTV1000, RHD4PRSHLSTACCTV1000, RHD4CZ1C081CCTV1300 |
| RHD4CZ1C081CCTV1500 |  | Protection post Installation for CCTV Poles for Security Network - (RD-C-8 /1)-Z1-C081-CCTV | 2d | 2027-05-29 | 2027-05-30 | RHD4CZ1C081CCTV1400 |

| ID | WBS | Task | Duration | Start | Finish | Predecessors |
| --- | --- | --- | --- | --- | --- | --- |
|  | 501 | **RHD4-02-002-C081-(CCTV)-Power and Infrastructure** |  | 2027-05-29 | 2027-06-01 |  |
| RHD4CZ1C081CCTV4100 |  | Installation of Power outlet, UPS and midspan for PTZ Camerafor Cameras for Security Network - (RD-C-8 /1)-Z1-C081-CCTV | 2d | 2027-05-29 | 2027-05-30 | RHD4PRSHLDOSCCTV1300, RHD4PRSHLSTACCTV1300, RHD4CZ1C081CCTV1400 |
| RHD4CZ1C081CCTV4200 |  | Short Range Wireless PoP wireless Bridgefor CCTV Poles for Security Network - (RD-C-8 /1)-Z1-C081-CCTV | 2d | 2027-05-31 | 2027-06-01 | RHD4CZ1C081CCTV4100 |
|  | 500 | **RHD4-02-002-C081-(CCTV)-Camera** |  | 2027-06-02 | 2027-06-03 |  |
| RHD4CZ1C081CCTV3100 |  | Installation for Cameras for Security Network - (RD-C-8 /1)-Z1-C081-CCTV | 2d | 2027-06-02 | 2027-06-03 | RHD4PRSHLDOSCCTV1100, RHD4PRSHLSTACCTV1100, RHD4CZ1C081CCTV1400, RHD4CZ1C081CCTV4100, RHD4CZ1C081CCTV4200 |
|  | 503 | **RHD4-02-002-C081-(CCTV)-CCTV Panels and Components** |  | 2027-06-05 | 2027-06-21 |  |
| RHD4CZ1C081CCTV6100 |  | Installation for CCTV Panels for Security Network - (RD-C-8 /1)-Z1-C081-CCTV | 15d | 2027-06-05 | 2027-06-21 | RHD4PRSHLDOSCCTV1200, RHD4PRSHLSTACCTV1200, RHD4PRLOLSTACCTV1001, RHD4CZ1C081CCTV4200, RHD4CZ1C081CCTV3100 |
|  | 1460 | **RHD4-02-002-Z3** |  | 2026-08-23 | 2028-02-20 |  |
|  | 1650 | **RHD4-02-002-Z3-C011** |  | 2026-09-03 | 2028-01-15 |  |
|  | 1681 | **RHD4-02-002-Z3-C011-Crossings Sewage Network - SWCr** |  |  |  |  |
|  | 1689 | **RHD4-02-002-C011-(SWCr)-HDPE Pipes - 400 mm diameter** |  |  |  |  |
|  | 1699 | **RHD4-02-002-C011-(SWCr)-Butterfly Valve Chambers** |  |  |  |  |
|  | 1700 | **RHD4-02-002-C011-(SWCr)-Butterfly Valves** |  |  |  |  |
|  | 1725 | **RHD4-02-002-Z3-C011-Crossings Potable Network - PTCr** |  |  |  |  |
|  | 1730 | **RHD4-02-002-C011-(PTCr)-HDPE Pipes - 450 mm diameter** |  |  |  |  |
|  | 1729 | **RHD4-02-002-C011-(PTCr)-HDPE Pipes - 400 mm diameter** |  |  |  |  |
|  | 1738 | **RHD4-02-002-C011-(PTCr)-Fire Hydrant** |  |  |  |  |
|  | 1772 | **RHD4-02-002-Z3-C011-Crossings Irrigation Network - IRRC** |  |  |  |  |
|  | 1777 | **RHD4-02-002-C011-(IRRC)-HDPE Pipes - 315 mm diameter** |  |  |  |  |
|  | 1773 | **RHD4-02-002-C011-(IRRC)-HDPE Pipes - 160 mm diameter** |  |  |  |  |
|  | 1781 | **RHD4-02-002-C011-(IRRC)-Gate Valves (Direct Buried)** |  |  |  |  |
|  | 1782 | **RHD4-02-002-C011-(IRRC)-Butterfly Valve Chamber** |  |  |  |  |
|  | 1783 | **RHD4-02-002-C011-(IRRC)-Butterfly Valves** |  |  |  |  |
|  | 1784 | **RHD4-02-002-C011-(IRRC)-Wash out Chamber** |  |  |  |  |
|  | 1785 | **RHD4-02-002-C011-(IRRC)-Wash out Valves** |  |  |  |  |
|  | 1829 | **RHD4-02-002-Z3-C011-Road Works - RD** |  | 2026-09-03 | 2028-01-15 |  |
|  | 1830 | **RHD4-02-002-C011-(RD)-Subgrade** |  | 2026-09-03 | 2026-09-12 |  |
| RHD4CZ3C011RD1100 |  | Supply, lay and compaction subgrade compacted thickness 300 mm for Roads - (RD-C-1 /1)-Z3-C011-RD | 8d | 2026-09-03 | 2026-09-12 | RHD4ENSDZ3APPEW100, RHD4ENSDZ3APPRD220, RHD4CZ2L102RD1100 SS |
|  | 1831 | **RHD4-02-002-C011-(RD)-Aggregate Base Course** |  | 2026-09-13 | 2026-09-26 |  |
| RHD4CZ3C011RD2100 |  | Supply, lay and compaction Aggregate base course compacted thickness 300 mmfor Roads - (RD-C-1 /1)-Z3-C011-RD | 11d | 2026-09-13 | 2026-09-26 | RHD4PRSHLDOSRD1000, RHD4PRSHLSTAGRD1000, RHD4CZ3C011RD1100 |
|  | 1832 | **RHD4-02-002-C011-(RD)-Bituminous base course Two Layers, including (MC1)&(RC2)** |  | 2026-09-28 | 2027-12-09 |  |
| RHD4CZ3C011RD3100 |  | Supply, lay and Asphaltic base course including Prime Coat (MC1) for 1st Layer - (RD-C-1 /1)-Z3-C011-RD | 3d | 2026-09-28 | 2026-09-30 | RHD4PRSHLDOSRD1100, RHD4ENMSASPH2000, RHD4ENMSASPH2010, RHD4PRSHLSTAGRD1100, RHD4CZ3C011RD2100, RHD4CZ3C011MV2400 |
| RHD4CZ3C011RD3200 |  | Supply, lay and Asphaltic base course including Tack Coat (RC2) for 2nd Layer - (RD-C-1 /1)-Z3-C011-RD | 4d | 2027-12-06 | 2027-12-09 | RHD4PRSHLDOSRD1100, RHD4PRSHLSTAGRD1100, RHD4CZ3C011RD3100, RHD4CZ3C011CCTV6100 |
|  | 1834 | **RHD4-02-002-C011-(RD)-Precast Concrete Curb** |  | 2027-12-11 | 2027-12-14 |  |
| RHD4CZ3C011RD5100 |  | Supply and installation Precast Concrete Kerb for Roads - (RD-C-1 /1)-Z3-C011-RD | 4d | 2027-12-11 | 2027-12-14 | RHD4PRSHLDOSRD1200, RHD4ENMSRD2000, RHD4ENMSRD2010, RHD4PRSHLSTAGRD1200, RHD4CZ3C011RD3200 |
|  | 1837 | **RHD4-02-002-C011-(RD)-Traffic Signage** |  | 2028-01-05 | 2028-01-15 |  |
| RHD4CZ3C011RD8100 |  | Installation of Traffic Signage for Road Network - (RD-C-1 /1)-Z3-C011-RD | 9d | 2028-01-05 | 2028-01-15 | RHD4PRSHLDOSRD1600, RHD4PRSHLSTAGRD1600, RHD4CZ3C011RD5100, RHD4CZ3C011TC2400, RHD4CZ3C011ICT2400, RHD4CZ3L122RD8100 |
|  | 1835 | **RHD4-02-002-C011-(RD)-Precast Interlocking Block Pavers** |  |  |  |  |
|  | 1833 | **RHD4-02-002-C011-(RD)-Bituminous concrete wearing course including tack coat (RC2)** |  | 2027-12-15 | 2027-12-18 |  |
| RHD4CZ3C011RD4100 |  | Supply, lay and compaction Asphaltic wearing course including tack Coat (RC2)for Road Network - (RD-C-1 /1)-Z3-C011-RD | 3d | 2027-12-15 | 2027-12-18 | RHD4CZ3C011RD5100 |
|  | 1838 | **RHD4-02-002-C011-(RD)-Speed Table and Wheel Stopper** |  | 2027-12-19 | 2027-12-21 |  |
| RHD4CZ3C011RD9100 |  | Installation for Speed Bump for Road Network - (RD-C-1 /1)-Z3-C011-RD | 3d | 2027-12-19 | 2027-12-21 | RHD4CZ3C011RD4100, RHD4GNICTZ9FT1900 |
|  | 1836 | **RHD4-02-002-C011-(RD)-Pavement Marking** |  | 2027-12-22 | 2027-12-26 |  |
| RHD4CZ3C011RD7100 |  | Pavement Markings for Road Network - (RD-C-1 /1)-Z3-C011-RD | 4d | 2027-12-22 | 2027-12-26 | RHD4PRSHLDOSRD1500, RHD4PRSHLSTAGRD1500, RHD4CZ3C011RD9100 |
|  | 4299 | **RHD4-02-002-Z3-C011-Concrete Box Culvert - ST** |  | 2026-12-31 | 2027-02-14 |  |
|  | 4300 | **RHD4-02-002-C011-(ST)-Concrete Box Culvert** |  | 2026-12-31 | 2027-02-14 |  |
| RHD4CZ3C011ST4100 |  | Excavation works for Box Culvert - (RD-C-1/1)-Z3-C011-ST | 7d | 2026-12-31 | 2027-01-07 | RHD4ENSWL1APPSTC1000, RHD4CZ3C011RW1000, RHD4CZ3L122ST4100 SS |
| RHD4CZ3C011ST4200 |  | PC works for Box Culvert - (RD-C-1/1)-Z3-C011-ST | 3d | 2027-01-09 | 2027-01-11 | RHD4CZ3C011ST4100, RHD4CZ3L122ST4200 |
| RHD4CZ3C011ST4400 |  | Raft works for Box Culvert - (RD-C-1/1)-Z3-C011-ST | 7d | 2027-01-12 | 2027-01-19 | RHD4CZ3C011ST4200 |
| RHD4CZ3C011ST4500 |  | Wall and slab works for Box Culvert - (RD-C-1/1)-Z3-C011-ST | 7d | 2027-01-20 | 2027-01-27 | RHD4CZ3C011ST4400 |
| RHD4CZ3C011ST4700 |  | Backfilling works for Box Culvert - (RD-C-1/1)-Z3-C011-ST | 7d | 2027-01-28 | 2027-02-04 | RHD4CZ3C011ST4500 |
| RHD4CZ3C011ST4600 |  | Insulation and Testing for Box Culvert - (RD-C-1/1)-Z3-C011-ST | 8d | 2027-02-06 | 2027-02-14 | RHD4CZ3C011ST4700 |
|  | 4301 | **RHD4-02-002-C011-(ST)-Concrete Chambers** |  |  |  |  |
|  | 1703 | **RHD4-02-002-Z3-C011-Sewage Network - SW** |  |  |  |  |
|  | 1711 | **RHD4-02-002-C011-(SW)-HDPE Pipes - 400 mm diameter** |  |  |  |  |
|  | 1712 | **RHD4-02-002-C011-(SW)-Concrete Encasement** |  |  |  |  |
|  | 1740 | **RHD4-02-002-Z3-C011-Potable Network - PT** |  | 2027-01-09 | 2027-02-18 |  |
|  | 1745 | **RHD4-02-002-C011-(PT)-HDPE Pipes - 450 mm diameter** |  | 2027-01-09 | 2027-02-01 |  |
| RHD4CZ3C011PT1104 |  | Excavation works for HDPE Pipline 450 mm - (RD-C-1 /1)-Z3-C011-PT | 4d | 2027-01-09 | 2027-01-12 | RHD4ENSDZ3APPPT130, RHD4ENMSPT2000, RHD4CZ3C011ST4100, RHD4CZ2L102PT1101 |
| RHD4CZ3C011PT1204 |  | Bedding works for HDPE Pipline 450 mm - (RD-C-1 /1)-Z3-C011-PT | 3d | 2027-01-13 | 2027-01-16 | RHD4CZ3C011PT1104 |
| RHD4CZ3C011PT1304 |  | Installing for HDPE Pipline 450 mm - (RD-C-1 /1)-Z3-C011-PT | 5d | 2027-01-17 | 2027-01-21 | RHD4PRSHLDOSPT1000, RHD4PRSHLSTAGPT1000, RHD4CZ3C011PT1204 |
| RHD4CZ3C011PT1404 |  | Primary Test for HDPE Pipline 450 mm - (RD-C-1 /1)-Z3-C011-PT | 2d | 2027-01-26 | 2027-01-27 | RHD4CZ3C011PT1304, RHD4CZ3C011PT5100 |
| RHD4CZ3C011PT1504 |  | Backfilling and warning tape works for HDPE Pipline 450 mm - (RD-C-1 /1)-Z3-C011-PT | 4d | 2027-01-28 | 2027-02-01 | RHD4CZ3C011PT1404 |
|  | 1744 | **RHD4-02-002-C011-(PT)-HDPE Pipes - 400 mm diameter** |  | 2027-01-13 | 2027-01-31 |  |
| RHD4CZ3C011PT1103 |  | Excavation works for HDPE Pipline 400 mm - (RD-C-1 /1)-Z3-C011-PT | 3d | 2027-01-13 | 2027-01-16 | RHD4ENSDZ3APPPT130, RHD4ENMSPT2000, RHD4CZ3C011PT1104 |
| RHD4CZ3C011PT1203 |  | Bedding works for HDPE Pipline 400 mm - (RD-C-1 /1)-Z3-C011-PT | 3d | 2027-01-17 | 2027-01-19 | RHD4CZ3C011PT1103, RHD4CZ3C011PT1204 |
| RHD4CZ3C011PT1303 |  | Installing for HDPE Pipline 400 mm - (RD-C-1 /1)-Z3-C011-PT | 3d | 2027-01-23 | 2027-01-25 | RHD4PRSHLDOSPT1000, RHD4PRSHLSTAGPT1000, RHD4CZ3C011PT1203, RHD4CZ3C011PT1304 |
| RHD4CZ3C011PT1403 |  | Primary Test for HDPE Pipline 400 mm - (RD-C-1 /1)-Z3-C011-PT | 2d | 2027-01-26 | 2027-01-27 | RHD4CZ3C011PT1303, RHD4CZ3C011PT5100 |
| RHD4CZ3C011PT1503 |  | Backfilling and warning tape works for HDPE Pipline 400 mm - (RD-C-1 /1)-Z3-C011-PT | 3d | 2027-01-28 | 2027-01-31 | RHD4CZ3C011PT1403 |
|  | 1747 | **RHD4-02-002-C011-(PT)-Butterfly Valve Chamber** |  | 2027-01-13 | 2027-01-21 |  |

| ID | WBS | Task | Duration | Start | Finish | Predecessors |
| --- | --- | --- | --- | --- | --- | --- |
| RHD4CZ3C011PT2100 |  | Excavation and Bedding for Butterfly Valve Chamber for Potable Water Network - (RD-C-1 /1)-Z3-C011-PT | 2d | 2027-01-13 | 2027-01-14 | RHD4ENSDZ3APPPT130, RHD4CZ3C011PT1104 |
| RHD4CZ3C011PT2200 |  | PC works for Butterfly Valve Chamber for Potable Water Network - (RD-C-1 /1)-Z3-C011-PT | 2d | 2027-01-16 | 2027-01-17 | RHD4CZ3C011PT2100 |
| RHD4CZ3C011PT2300 |  | Installation for Butterfly Valve Chamber for Potable Water Network - (RD-C-1 /1)-Z3-C011-PT | 2d | 2027-01-18 | 2027-01-19 | RHD4PRSHLDOSPT1100, RHD4PRSHLDOSPT1400, RHD4PRSHLSTAGPT1100, RHD4PRSHLSTAGPT1400, RHD4CZ3C011PT2200 |
| RHD4CZ3C011PT2400 |  | Backfilling works for Butterfly Valve Chamber for Potable Water Network - (RD-C-1 /1)-Z3-C011-PT | 2d | 2027-01-20 | 2027-01-21 | RHD4CZ3C011PT2300 |
|  | 1748 | **RHD4-02-002-C011-(PT)-Butterfly Valves** |  | 2027-01-20 | 2027-01-24 |  |
| RHD4CZ3C011PT3101 |  | Installation for Butterfly Valves for Potable Water Network - (RD-C-1 /1)-Z3-C011-PT | 2d | 2027-01-20 | 2027-01-21 | RHD4PRSHLDOSPT1200, RHD4PRSHLSTAGPT1200, RHD4CZ3C011PT2300 |
| RHD4CZ3C011PT3201 |  | Stem and Service box for Butterfly Valves for Potable Water Network - (RD-C-1 /1)-Z3-C011-PT | 2d | 2027-01-23 | 2027-01-24 | RHD4PRSHLDOSPT1300, RHD4PRSHLSTAGPT1300, RHD4CZ3C011PT3101, RHD4CZ3C011PT2400 |
|  | 1749 | **RHD4-02-002-C011-(PT)-Wash out Valve Chambers** |  | 2027-01-13 | 2027-01-21 |  |
| RHD4CZ3C011PT2101 |  | Excavation and Bedding for Wash out Valve Chambers for Potable Water Network - (RD-C-1 /1)-Z3-C011-PT | 2d | 2027-01-13 | 2027-01-14 | RHD4ENSDZ3APPPT130, RHD4CZ3C011PT1104 |
| RHD4CZ3C011PT2201 |  | PC works for Wash out Valve Chambers for Potable Water Network - (RD-C-1 /1)-Z3-C011-PT | 2d | 2027-01-16 | 2027-01-17 | RHD4CZ3C011PT2101 |
| RHD4CZ3C011PT2301 |  | Installation for Wash out Valve Chambers for Potable Water Network - (RD-C-1 /1)-Z3-C011-PT | 2d | 2027-01-18 | 2027-01-19 | RHD4PRSHLDOSPT1100, RHD4PRSHLDOSPT1400, RHD4PRSHLSTAGPT1100, RHD4PRSHLSTAGPT1400, RHD4CZ3C011PT2201 |
| RHD4CZ3C011PT2401 |  | Backfilling works for Wash out Valve Chambers for Potable Water Network - (RD-C-1 /1)-Z3-C011-PT | 2d | 2027-01-20 | 2027-01-21 | RHD4CZ3C011PT2301 |
|  | 1750 | **RHD4-02-002-C011-(PT)-Wash out Valves** |  | 2027-01-20 | 2027-01-24 |  |
| RHD4CZ3C011PT3102 |  | Installation for Wash out Valves for Potable Water Network - (RD-C-1 /1)-Z3-C011-PT | 2d | 2027-01-20 | 2027-01-21 | RHD4PRSHLDOSPT1200, RHD4PRSHLSTAGPT1200, RHD4CZ3C011PT2301 |
| RHD4CZ3C011PT3202 |  | Stem and Service box for Wash out Valves for Potable Water Network - (RD-C-1 /1)-Z3-C011-PT | 2d | 2027-01-23 | 2027-01-24 | RHD4PRSHLDOSPT1300, RHD4PRSHLSTAGPT1300, RHD4CZ3C011PT3102, RHD4CZ3C011PT2401 |
|  | 1751 | **RHD4-02-002-C011-(PT)-Air Valve Chambers** |  | 2027-01-13 | 2027-01-21 |  |
| RHD4CZ3C011PT2102 |  | Excavation and Bedding for Air Valve Chambers for Potable Water Network - (RD-C-1 /1)-Z3-C011-PT | 2d | 2027-01-13 | 2027-01-14 | RHD4ENSDZ3APPPT130, RHD4CZ3C011PT1104 |
| RHD4CZ3C011PT2202 |  | PC works for Air Valve Chambers for Potable Water Network - (RD-C-1 /1)-Z3-C011-PT | 2d | 2027-01-16 | 2027-01-17 | RHD4CZ3C011PT2102 |
| RHD4CZ3C011PT2302 |  | Installation for Air Valve Chambers for Potable Water Network - (RD-C-1 /1)-Z3-C011-PT | 2d | 2027-01-18 | 2027-01-19 | RHD4PRSHLDOSPT1100, RHD4PRSHLDOSPT1400, RHD4PRSHLSTAGPT1100, RHD4PRSHLSTAGPT1400, RHD4CZ3C011PT2202 |
| RHD4CZ3C011PT2402 |  | Backfilling works for Air Valve Chambers for Potable Water Network - (RD-C-1 /1)-Z3-C011-PT | 2d | 2027-01-20 | 2027-01-21 | RHD4CZ3C011PT2302 |
|  | 1752 | **RHD4-02-002-C011-(PT)-Air Valves** |  | 2027-01-20 | 2027-01-24 |  |
| RHD4CZ3C011PT3103 |  | Installation for Air Valves for Potable Water Network - (RD-C-1 /1)-Z3-C011-PT | 2d | 2027-01-20 | 2027-01-21 | RHD4PRSHLDOSPT1200, RHD4PRSHLSTAGPT1200, RHD4CZ3C011PT2302 |
| RHD4CZ3C011PT3203 |  | Stem and Service box for Air Valves for Potable Water Network - (RD-C-1 /1)-Z3-C011-PT | 2d | 2027-01-23 | 2027-01-24 | RHD4PRSHLDOSPT1300, RHD4PRSHLSTAGPT1300, RHD4CZ3C011PT3103, RHD4CZ3C011PT2402 |
|  | 1753 | **RHD4-02-002-C011-(PT)-Fire Hydrant** |  | 2027-02-02 | 2027-02-18 |  |
| RHD4CZ3C011PT4100 |  | Excavation and Bedding and Pipe Installation for Fire Hydrant - (RD-C-1 /1)-Z3-C011-PT | 4d | 2027-02-02 | 2027-02-06 | RHD4ENSDZ3APPPT130, RHD4CZ3C011PT1504, RHD4CZ3C011PT1503 |
| RHD4CZ3C011PT4200 |  | Valve Installation for Fire Hydrant - (RD-C-1 /1)-Z3-C011-PT | 3d | 2027-02-07 | 2027-02-09 | RHD4CZ3C011PT4100 |
| RHD4CZ3C011PT4300 |  | Stem for Fire Hydrant - (RD-C-1 /1)-Z3-C011-PT | 3d | 2027-02-10 | 2027-02-13 | RHD4CZ3C011PT4200 |
| RHD4CZ3C011PT4400 |  | Fire Installation for Fire Hydrant - (RD-C-1 /1)-Z3-C011-PT | 3d | 2027-02-14 | 2027-02-16 | RHD4PRSHLDOSPT1500, RHD4PRSHLSTAGPT1500, RHD4CZ3C011PT4300 |
| RHD4CZ3C011PT4500 |  | Protection Barriers for Fire Hydrant - (RD-C-1 /1)-Z3-C011-PT | 2d | 2027-02-17 | 2027-02-18 | RHD4CZ3C011PT4400 |
|  | 1754 | **RHD4-02-002-C011-(PT)-Concrete Encasement** |  | 2027-01-23 | 2027-01-25 |  |
| RHD4CZ3C011PT5100 |  | Pipe Encasement for Potable Pipelines - (RD-C-1 /1)-Z3-C011-PT | 3d | 2027-01-23 | 2027-01-25 | RHD4CZ3C011PT1304 FF, RHD4CZ3C011PT1303 FF, RHD4CZ3C011PT1304 SS, RHD4CZ3C011PT1303 SS, RHD4CZ3C011PT1203, RHD4CZ3C011PT1204 |
|  | 1755 | **RHD4-02-002-Z3-C011-Irrigation Network - IRR** |  | 2027-02-01 | 2027-04-13 |  |
|  | 1770 | **RHD4-02-002-C011-(IRR)-Air Valves** |  | 2027-02-23 | 2027-02-27 |  |
| RHD4CZ3C011IRR3103 |  | Installation for Air Valves for Irrigation Network - (RD-C-1 /1)-Z3-C011-IRR | 2d | 2027-02-23 | 2027-02-24 | RHD4PRSHLDOSIRR1100, RHD4PRSHLSTAGIRR1100, RHD4CZ3C011IRR2402, RHD4CZ3C011IRR1300 |
| RHD4CZ3C011IRR3203 |  | Stem and Service box for Air Valves for Irrigation Network - (RD-C-1 /1)-Z3-C011-IRR | 2d | 2027-02-25 | 2027-02-27 | RHD4PRSHLDOSIRR1300, RHD4PRSHLSTAGIRR1300, RHD4CZ3C011IRR3103 |
|  | 1758 | **RHD4-02-002-C011-(IRR)-HDPE Pipes - 200 mm diameter** |  |  |  |  |
|  | 6107 | **RHD4-02-002-C011-(IRR)-HDPE Pipes - 160 mm diameter** |  | 2027-02-10 | 2027-02-21 |  |
| RHD4CZ3C011IRR1100 |  | Excavation works for HDPE Pipline 160 mm - (RD-C-1 /1)-Z3-C011-IRR | 2d | 2027-02-10 | 2027-02-11 | RHD4CZ3C011IRR1104 |
| RHD4CZ3C011IRR1200 |  | Bedding works for HDPE Pipline 160 mm - (RD-C-1 /1)-Z3-C011-IRR | 2d | 2027-02-13 | 2027-02-14 | RHD4CZ3C011IRR1100 |
| RHD4CZ3C011IRR1300 |  | Installing for HDPE Pipline 160 mm - (RD-C-1 /1)-Z3-C011-IRR | 2d | 2027-02-15 | 2027-02-16 | RHD4CZ3C011IRR1200 |
| RHD4CZ3C011IRR1400 |  | Primary Test for HDPE Pipline 160 mm - (RD-C-1 /1)-Z3-C011-IRR | 2d | 2027-02-17 | 2027-02-18 | RHD4CZ3C011IRR1300 |
| RHD4CZ3C011IRR1500 |  | Backfilling and warning tape works for HDPE Pipline 160 mm - (RD-C-1 /1)-Z3-C011-IRR | 2d | 2027-02-20 | 2027-02-21 | RHD4CZ3C011IRR1400 |
|  | 6111 | **RHD4-02-002-C011-(IRR)-HDPE Pipes - 315 mm diameter** |  | 2027-02-01 | 2027-04-04 |  |
| RHD4CZ3C011IRR1104 |  | Excavation works for HDPE Pipline 315 mm - (RD-C-1 /1)-Z3-C011-IRR | 8d | 2027-02-01 | 2027-02-09 | RHD4CZ3C011RW3003 FF, RHD4CZ3C011PT1503 |
| RHD4CZ3C011IRR1204 |  | Bedding works for HDPE Pipline 315 mm - (RD-C-1 /1)-Z3-C011-IRR | 10d | 2027-02-10 | 2027-02-21 | RHD4CZ3C011IRR1104 |
| RHD4CZ3C011IRR1304 |  | Installing for HDPE Pipline 315 mm - (RD-C-1 /1)-Z3-C011-IRR | 16d | 2027-02-23 | 2027-03-16 | RHD4CZ3C011IRR1204 |
| RHD4CZ3C011IRR1404 |  | Primary Test for HDPE Pipline 315 mm - (RD-C-1 /1)-Z3-C011-IRR | 6d | 2027-03-17 | 2027-03-23 | RHD4CZ3C011IRR1304 |
| RHD4CZ3C011IRR1504 |  | Backfilling and warning tape works for HDPE Pipline 315 mm - (RD-C-1 /1)-Z3-C011-IRR | 10d | 2027-03-24 | 2027-04-04 | RHD4CZ3C011IRR1404 |
|  | 6115 | **RHD4-02-002-C011-(IRR)-Gate Valves (Direct Buried)** |  | 2027-04-05 | 2027-04-13 |  |
| RHD4CZ3C011IRR3100 |  | Installation for Direct Buried Gate Valves - (RD-C-1 /1)-Z3-C011-IRR | 4d | 2027-04-05 | 2027-04-08 | RHD4CZ3C011IRR1304 SS, RHD4CZ3C011IRR1304 FF, RHD4CZ3C011IRR1300 SS, RHD4CZ3C011IRR1300 FF, RHD4CZ3C011IRR1504 |
| RHD4CZ3C011IRR3200 |  | Stem and Service box for Direct Buried Gate Valves - (RD-C-1 /1)-Z3-C011-IRR | 4d | 2027-04-10 | 2027-04-13 | RHD4CZ3C011IRR3100, RHD4CZ3C011IRR1500 |
|  | 6116 | **RHD4-02-002-C011-(IRR)-Butterfly Valve Chamber** |  | 2027-02-23 | 2027-03-03 |  |
| RHD4CZ3C011IRR2100 |  | Excavation and Bedding for Butterfly Valve Chamber for Irrigation Network - (RD-C-1 /1)-Z3-C011-IRR | 2d | 2027-02-23 | 2027-02-24 | RHD4CZ3C011IRR1500 |
| RHD4CZ3C011IRR2200 |  | PC works for Butterfly Valve Chamber for Irrigation Network - (RD-C-1 /1)-Z3-C011-IRR | 2d | 2027-02-25 | 2027-02-27 | RHD4CZ3C011IRR2100 |
| RHD4CZ3C011IRR2300 |  | Installation for Butterfly Valve Chamber for Irrigation Network - (RD-C-1 /1)-Z3-C011-IRR | 2d | 2027-02-28 | 2027-03-01 | RHD4CZ3C011IRR2200 |
| RHD4CZ3C011IRR2400 |  | Backfilling works for Butterfly Valve Chamber for Irrigation Network - (RD-C-1 /1)-Z3-C011-IRR | 2d | 2027-03-02 | 2027-03-03 | RHD4CZ3C011IRR2300 |
|  | 6117 | **RHD4-02-002-C011-(IRR)-Butterfly Valves** |  | 2027-03-02 | 2027-03-06 |  |
| RHD4CZ3C011IRR3101 |  | Installation for Butterfly Valves for Irrigation Network - (RD-C-1 /1)-Z3-C011-IRR | 2d | 2027-03-02 | 2027-03-03 | RHD4CZ3C011IRR2300 |
| RHD4CZ3C011IRR3201 |  | Stem and Service box for Butterfly Valves for Irrigation Network - (RD-C-1 /1)-Z3-C011-IRR | 2d | 2027-03-04 | 2027-03-06 | RHD4CZ3C011IRR3101, RHD4CZ3C011IRR2400 |
|  | 6685 | **RHD4-02-002-C011-(IRR)-Wash out Chamber** |  | 2027-02-13 | 2027-02-21 |  |
| RHD4CZ3C011IRR2101 |  | Excavation and Bedding for Wash out Chamber for Irrigation Network - (RD-C-1 /1)-Z3-C011-IRR | 2d | 2027-02-13 | 2027-02-14 | RHD4CZ3C011IRR2102 SS |
| RHD4CZ3C011IRR2201 |  | PC works for Wash out Chamber for Irrigation Network - (RD-C-1 /1)-Z3-C011-IRR | 2d | 2027-02-15 | 2027-02-16 | RHD4CZ3C011IRR2101 |
| RHD4CZ3C011IRR2301 |  | Installation for Wash out Chamber for Irrigation Network - (RD-C-1 /1)-Z3-C011-IRR | 2d | 2027-02-17 | 2027-02-18 | RHD4CZ3C011IRR2201 |
| RHD4CZ3C011IRR2401 |  | Backfilling works for Wash out Chamber for Irrigation Network - (RD-C-1 /1)-Z3-C011-IRR | 2d | 2027-02-20 | 2027-02-21 | RHD4CZ3C011IRR2301 |
|  | 6686 | **RHD4-02-002-C011-(IRR)-Wash out Valves** |  | 2027-02-20 | 2027-02-24 |  |
| RHD4CZ3C011IRR3102 |  | Installation for Wash out Valve for Irrigation Network - (RD-C-1 /1)-Z3-C011-IRR | 2d | 2027-02-20 | 2027-02-21 | RHD4CZ3C011IRR2301 |
| RHD4CZ3C011IRR3202 |  | Stem and Service box for Wash out Valve for Irrigation Network - (RD-C-1 /1)-Z3-C011-IRR | 2d | 2027-02-23 | 2027-02-24 | RHD4CZ3C011IRR3102, RHD4CZ3C011IRR2401 |
|  | 1769 | **RHD4-02-002-C011-(IRR)-Air Valve Chamber** |  | 2027-02-13 | 2027-02-21 |  |
| RHD4CZ3C011IRR2102 |  | Excavation and Bedding for Valve Chamber for Irrigation Network - (RD-C-1 /1)-Z3-C011-IRR | 2d | 2027-02-13 | 2027-02-14 | RHD4ENSDZ3APPIRR140, RHD4CZ3C011IRR1100 |
| RHD4CZ3C011IRR2202 |  | PC works for Valve Chamber for Irrigation Network - (RD-C-1 /1)-Z3-C011-IRR | 2d | 2027-02-15 | 2027-02-16 | RHD4CZ3C011IRR2102 |

| ID | WBS | Task | Duration | Start | Finish | Predecessors |
| --- | --- | --- | --- | --- | --- | --- |
| RHD4CZ3C011IRR2302 |  | Installation for Valve Chamber for Irrigation Network - (RD-C-1 /1)-Z3-C011-IRR | 2d | 2027-02-17 | 2027-02-18 | RHD4PRSHLDOSIRR1200, RHD4PRSHLDOSIRR1400, RHD4PRSHLSTAGIRR1200, RHD4PRSHLSTAGIRR1400, RHD4CZ3C011IRR2202 |
| RHD4CZ3C011IRR2402 |  | Backfilling works for Valve Chamber for Irrigation Network - (RD-C-1 /1)-Z3-C011-IRR | 2d | 2027-02-20 | 2027-02-21 | RHD4CZ3C011IRR2302 |
|  | 1771 | **RHD4-02-002-C011-(IRR)-Concrete Encasement** |  |  |  |  |
|  | 1789 | **RHD4-02-002-Z3-C011-Medium Voltage Network - MV** |  | 2026-09-13 | 2027-02-17 |  |
|  | 1790 | **RHD4-02-002-C011-(MV)-Medium Voltage cable trench** |  | 2027-01-07 | 2027-02-03 |  |
| RHD4CZ3C011MV1100 |  | Excavation for Medium Voltage Trench - (RD-C-1 /1)-Z3-C011-MV | 5d | 2027-01-07 | 2027-01-12 | RHD4ENSDZ3APPMV150, RHD4CZ3C011MV2100, RHD4CZ1C081MV1100 SS |
| RHD4CZ3C011MV1200 |  | Trench Backfilling for Medium Voltage Network - (RD-C-1 /1)-Z3-C011-MV | 7d | 2027-01-27 | 2027-02-03 | RHD4CZ3C011MV3200, RHD4CZ3C011MV3101 |
|  | 1791 | **RHD4-02-002-C011-(MV)-Medium Voltage duct banks** |  | 2026-09-13 | 2026-09-27 |  |
| RHD4CZ3C011MV2100 |  | Excavation of Duct Banks for Medium Voltage Network - (RD-C-1 /1)-Z3-C011-MV | 3d | 2026-09-13 | 2026-09-15 | RHD4ENSDZ3APPMV150, RHD4CZ3C011RD1100 |
| RHD4CZ3C011MV2200 |  | Installation of Duct Banks for Medium Voltage Network - (RD-C-1 /1)-Z3-C011-MV | 4d | 2026-09-16 | 2026-09-20 | RHD4PRSHLDOSMV1000, RHD4PRSHLSTAGMV1000, RHD4CZ3C011MV2100 |
| RHD4CZ3C011MV2300 |  | Pouring of Duct Banks for Medium Voltage Network - (RD-C-1 /1)-Z3-C011-MV | 3d | 2026-09-21 | 2026-09-24 | RHD4CZ3C011MV2200 |
| RHD4CZ3C011MV2400 |  | Backfilling of Duct Banks for Medium Voltage Network - (RD-C-1 /1)-Z3-C011-MV | 2d | 2026-09-26 | 2026-09-27 | RHD4CZ3C011MV2300 |
|  | 1792 | **RHD4-02-002-C011-(MV)-Medium Voltage cables 3Cx 500 mm²** |  | 2027-01-13 | 2027-02-17 |  |
| RHD4CZ3C011MV3100 |  | Installation of Medium Voltage Cables 3Cx 500 mm² - (RD-C-1 /1)-Z3-C011-MV | 3d | 2027-01-13 | 2027-01-16 | RHD4PRSHLDOSMV1100, RHD4ENMSMV2000, RHD4ENMSMV2010, RHD4PRSHLSTAGMV1100, RHD4CZ3C011MV1100 |
| RHD4CZ3C011MV3200 |  | Joints Installation of Medium Voltage Cables 3Cx 500 mm² - (RD-C-1 /1)-Z3-C011-MV | 9d | 2027-01-17 | 2027-01-26 | RHD4PRSHLDOSMV1300, RHD4PRSHLSTAGMV1300, RHD4CZ3C011MV3100 |
| RHD4CZ3C011MV3300 |  | Testing of Medium Voltage Cables 3Cx 500 mm² - (RD-C-1 /1)-Z3-C011-MV | 9d | 2027-02-04 | 2027-02-14 | RHD4CZ3C011MV3200, RHD4CZ3C011MV1200, RHD4CZ3C011MV4200 |
| RHD4CZ3C011MV3400 |  | Termination of Medium Voltage Cables 3Cx 500 mm² - (RD-C-1 /1)-Z3-C011-MV | 3d | 2027-02-15 | 2027-02-17 | RHD4CZ3C011MV3300, RHD4CZ3C011MV5400 |
|  | 1793 | **RHD4-02-002-C011-(MV)-Medium Voltage cables 3Cx 50 mm²** |  | 2027-01-13 | 2027-02-13 |  |
| RHD4CZ3C011MV3101 |  | Installation of Medium Voltage Cables 3Cx 50 mm² - (RD-C-1 /1)-Z3-C011-MV | 2d | 2027-01-13 | 2027-01-14 | RHD4PRSHLDOSMV1200, RHD4ENMSMV2000, RHD4ENMSMV2010, RHD4PRSHLSTAGMV1200, RHD4CZ3C011MV1100 |
| RHD4CZ3C011MV3301 |  | Testing of Medium Voltage Cables 3Cx 50 mm² - (RD-C-1 /1)-Z3-C011-MV | 2d | 2027-02-04 | 2027-02-06 | RHD4CZ3C011MV3101, RHD4CZ3C011MV1200 |
| RHD4CZ3C011MV3401 |  | Termination of Medium Voltage Cables 3Cx 50 mm² - (RD-C-1 /1)-Z3-C011-MV | 2d | 2027-02-11 | 2027-02-13 | RHD4CZ3C011MV3301, RHD4CZ3C011MV5400 |
|  | 1794 | **RHD4-02-002-C011-(MV)-Normally open Point (Outdoor Type)** |  | 2027-01-14 | 2027-01-18 |  |
| RHD4CZ3C011MV4100 |  | Installation for Normally open Point - (RD-C-1 /1)-Z3-C011-MV | 2d | 2027-01-14 | 2027-01-16 | RHD4PRSHLDOSMV1400, RHD4PRSHLSTAGMV1400, RHD4CZ3C011MV3101 SS, RHD4CZ3C011MV3100 FF |
| RHD4CZ3C011MV4200 |  | Termination for Normally open Point - (RD-C-1 /1)-Z3-C011-MV | 2d | 2027-01-17 | 2027-01-18 | RHD4CZ3C011MV4100 |
|  | 1795 | **RHD4-02-002-C011-(MV)-Unit Substations** |  | 2027-01-27 | 2027-02-10 |  |
| RHD4CZ3C011MV5100 |  | Excavation for Unit Substations for Medium Voltage Network - (RD-C-1 /1)-Z3-C011-MV | 2d | 2027-01-27 | 2027-01-28 | RHD4ENSDZ3APPMV150, RHD4CZ3C011MV1200 SS |
| RHD4CZ3C011MV5200 |  | Concrete Base Placement for Unit Substations for Medium Voltage Network - (RD-C-1 /1)-Z3-C011-MV | 2d | 2027-01-30 | 2027-01-31 | RHD4CZ3C011MV5100 |
| RHD4CZ3C011MV5300 |  | Installation for Fences and doors for Medium Voltage Network - (RD-C-1 /1)-Z3-C011-MV | 5d | 2027-02-01 | 2027-02-06 | RHD4CZ3C011MV5200 |
| RHD4CZ3C011MV5400 |  | Installation for Unit Substations for Medium Voltage Network - (RD-C-1 /1)-Z3-C011-MV | 4d | 2027-02-07 | 2027-02-10 | RHD4PRLOLSTAGMV1601, RHD4PRLOLSTAGMV1602, RHD4CZ3C011MV5300, RHD4CZ4L09SL5200 |
|  | 1796 | **RHD4-02-002-Z3-C011-Low Voltage Network - LV** |  | 2027-01-27 | 2027-02-27 |  |
|  | 1797 | **RHD4-02-002-C011-(LV)-Low Voltage duct banks** |  | 2027-01-27 | 2027-02-09 |  |
| RHD4CZ3C011LV2100 |  | Excavation of Duct Banks for Low Voltage Network - (RD-C-1 /1)-Z3-C011-LV | 3d | 2027-01-27 | 2027-01-30 | RHD4ENSDZ3APPLV160, RHD4CZ3C011RW3003, RHD4CZ3C011PT3203 |
| RHD4CZ3C011LV2200 |  | Installation of Duct Banks for Low Voltage Network - (RD-C-1 /1)-Z3-C011-LV | 4d | 2027-01-31 | 2027-02-03 | RHD4PRSHLDOSLV1000, RHD4PRSHLSTAGLV1000, RHD4CZ3C011LV2100 |
| RHD4CZ3C011LV2300 |  | Pouring of Duct Banks for Low Voltage Network - (RD-C-1 /1)-Z3-C011-LV | 3d | 2027-02-04 | 2027-02-07 | RHD4CZ3C011LV2200 |
| RHD4CZ3C011LV2400 |  | Backfilling of Duct Banks for Low Voltage Network - (RD-C-1 /1)-Z3-C011-LV | 2d | 2027-02-08 | 2027-02-09 | RHD4CZ3C011LV2300 |
|  | 1799 | **RHD4-02-002-C011-(LV)-Low Voltage cables** |  | 2027-02-10 | 2027-02-18 |  |
| RHD4CZ3C011LV3100 |  | Excavation for Low Voltage Cables for Low Voltage Network - (RD-C-1 /1)-Z3-C011-LV | 2d | 2027-02-10 | 2027-02-11 | RHD4ENSDZ3APPLV160, RHD4CZ3C011LV2400, RHD4CZ3C011MV1200 |
| RHD4CZ3C011LV3200 |  | Cable Laying of Low Voltage Cables for Low Voltage Network - (RD-C-1 /1)-Z3-C011-LV | 2d | 2027-02-13 | 2027-02-14 | RHD4PRSHLDOSLV1100, RHD4ENMSLV2000, RHD4ENMSLV2010, RHD4PRSHLSTAGLV1100, RHD4CZ3C011LV3100 |
| RHD4CZ3C011LV3300 |  | Warning tape and Backfill for Low Voltage Cables for Low Voltage Network - (RD-C-1 /1)-Z3-C011-LV | 2d | 2027-02-15 | 2027-02-16 | RHD4CZ3C011LV3200 |
| RHD4CZ3C011LV3400 |  | Testing of Low Voltage Cables for Low Voltage Network - (RD-C-1 /1)-Z3-C011-LV | 2d | 2027-02-17 | 2027-02-18 | RHD4CZ3C011LV3300 |
|  | 1800 | **RHD4-02-002-C011-(LV)-Low Voltage Distribution Pillars** |  | 2027-02-20 | 2027-02-27 |  |
| RHD4CZ3C011LV4100 |  | Leveling for Distribution Pillars for Low Voltage Network - (RD-C-1 /1)-Z3-C011-LV | 2d | 2027-02-20 | 2027-02-21 | RHD4CZ3C011LV3300, RHD4CZ3C011LV3400 |
| RHD4CZ3C011LV4200 |  | Lean Concrete for Distribution Pillars for Low Voltage Network - (RD-C-1 /1)-Z3-C011-LV | 2d | 2027-02-23 | 2027-02-24 | RHD4CZ3C011LV4100 |
| RHD4CZ3C011LV4300 |  | Installation of Distribution Pillars for Low Voltage Network - (RD-C-1 /1)-Z3-C011-LV | 2d | 2027-02-25 | 2027-02-27 | RHD4PRSHLDOSLV1200, RHD4PRSHLDOSLV1300, RHD4PRSHLSTAGLV1200, RHD4PRSHLSTAGLV1300, RHD4CZ3C011LV4200, RHD4CZ3C011MV3401 |
|  | 1801 | **RHD4-02-002-C011-(LV)-Low Voltage Distribution Pillars Earthing** |  |  |  |  |
|  | 1802 | **RHD4-02-002-Z3-C011-Street Lighting Network - SL** |  | 2027-01-31 | 2027-08-04 |  |
|  | 1803 | **RHD4-02-002-C011-(SL)-Street Lighting duct banks** |  | 2027-01-31 | 2027-02-17 |  |
| RHD4CZ3C011SL2100 |  | Excavation of Duct Banks for Street Lighting Network - (RD-C-1 /1)-Z3-C011-SL | 5d | 2027-01-31 | 2027-02-04 | RHD4ENSDZ3APPSL170, RHD4CZ3C011LV2100, RHD4CZ3C011PT3203 |
| RHD4CZ3C011SL2200 |  | Installation of Duct Banks for Street Lighting Network - (RD-C-1 /1)-Z3-C011-SL | 7d | 2027-02-06 | 2027-02-13 | RHD4PRSHLDOSSL1000, RHD4PRSHLSTAGSL1000, RHD4CZ3C011SL2100, RHD4CZ3C011LV2200 |
| RHD4CZ3C011SL2300 |  | Pouring of Duct Banks for Street Lighting Network - (RD-C-1 /1)-Z3-C011-SL | 2d | 2027-02-14 | 2027-02-15 | RHD4CZ3C011SL2200, RHD4CZ3C011LV2300 |
| RHD4CZ3C011SL2400 |  | Backfilling of Duct Banks for Street Lighting Network - (RD-C-1 /1)-Z3-C011-SL | 2d | 2027-02-16 | 2027-02-17 | RHD4CZ3C011SL2300, RHD4CZ3C011LV2400, RHD4CZ3C011ST4600 |
|  | 1804 | **RHD4-02-002-C011-(SL)-Street Lighting Drawpit** |  | 2027-02-18 | 2027-02-25 |  |
| RHD4CZ3C011SL5100 |  | Excavation of Drawpit size 600x600x900mm for Street Lighting Network - (RD-C-1 /1)-Z3-C011-SL | 2d | 2027-02-18 | 2027-02-20 | RHD4ENSDZ3APPSL170, RHD4CZ3C011SL2300, RHD4CZ3C011MV3400 |
| RHD4CZ3C011SL5200 |  | Installation of Drawpit size 600x600x900mm for Street Lighting Network - (RD-C-1 /1)-Z3-C011-SL | 4d | 2027-02-21 | 2027-02-25 | RHD4PRSHLDOSSL1400, RHD4PRSHLSTAGSL1400, RHD4CZ3C011SL5100 |
|  | 1805 | **RHD4-02-002-C011-(SL)-Street Lighting cables** |  | 2027-03-28 | 2027-07-18 |  |
| RHD4CZ3C011SL3100 |  | Excavation for Street Lighting Cables for Street Lighting Network - (RD-C-1 /1)-Z3-C011-SL | 9d | 2027-03-28 | 2027-04-06 | RHD4ENSDZ3APPSL170, RHD4CZ3C011SL1300, RHD4CZ3L122MV3301 |
| RHD4CZ3C011SL3200 |  | Cable Laying of Street Lighting Cables for Street Lighting Network - (RD-C-1 /1)-Z3-C011-SL | 9d | 2027-05-05 | 2027-05-19 | RHD4PRSHLDOSSL1100, RHD4ENMSSL2000, RHD4ENMSSL2010, RHD4PRSHLSTAGSL1100, RHD4CZ3C011SL3100, RHD4CZ5RA07RD7100, RHD4CZ3C011IRR3200 |
| RHD4CZ3C011SL3300 |  | Warning tape and Backfill for Street Lighting Cables for Street Lighting Network - (RD-C-1 /1)-Z3-C011-SL | 9d | 2027-05-20 | 2027-05-30 | RHD4CZ3C011SL3200 |
| RHD4CZ3C011SL3400 |  | Testing of Street Lighting Cables for Street Lighting Network - (RD-C-1 /1)-Z3-C011-SL | 7d | 2027-07-11 | 2027-07-18 | RHD4CZ3C011SL3300, RHD4CZ3C011LV3400, RHD4CZ3L122LV3400, RHD4CZ3L122LV4300, RHD4CZ2C082ST4600, RHD4CZ9L02TC5200 |
|  | 1806 | **RHD4-02-002-C011-(SL)-Street Lighting Poles** |  | 2027-02-28 | 2027-08-04 |  |
| RHD4CZ3C011SL1100 |  | Excavation for RC Base for Lighting Poles for Street Lighting Network - (RD-C-1 /1)-Z3-C011-SL | 6d | 2027-02-28 | 2027-03-06 | RHD4ENSDZ3APPSL170, RHD4CZ3C011SL2400, RHD4CZ3C011MV1200, RHD4CZ3C011IRR3203, RHD4CZ3C011MV3400 |
| RHD4CZ3C011SL1200 |  | Installation for RC Base for Lighting Poles for Street Lighting Network - (RD-C-1 /1)-Z3-C011-SL | 6d | 2027-03-07 | 2027-03-16 | RHD4CZ3C011SL1100, RHD4CZ3C011SL5200 |
| RHD4CZ3C011SL1300 |  | Backfill for RC Base for Lighting Poles for Street Lighting Network - (RD-C-1 /1)-Z3-C011-SL | 6d | 2027-03-17 | 2027-03-23 | RHD4CZ3C011SL1200 |
| RHD4CZ3C011SL1400 |  | Installation for Lighting Poles for Street Lighting Network - (RD-C-1 /1)-Z3-C011-SL | 9d | 2027-07-19 | 2027-07-28 | RHD4PRSHLDOSSL1200, RHD4ENMSSL2000, RHD4ENMSSL2010, RHD4PRSHLSTAGSL1200, RHD4CZ3C011SL1300, RHD4CZ3C011SL3400, RHD4CZ3C011LV4300, RHD4CZ3C083CCTV6100, RHD4CZ7C032CCTV4200 |
| RHD4CZ3C011SL1500 |  | Luminaire Installation for Lighting Poles for Street Lighting Network - (RD-C-1 /1)-Z3-C011-SL | 6d | 2027-07-29 | 2027-08-04 | RHD4PRSHLDOSSL1300, RHD4PRSHLSTAGSL1300, RHD4CZ3C011SL1400 |
|  | 1807 | **RHD4-02-002-C011-(SL)-Street Lighting Feeder Pillars** |  | 2027-05-31 | 2027-07-31 |  |
| RHD4CZ3C011SL4100 |  | Leveling for Distribution Pillars for Street Lighting Network - (RD-C-1 /1)-Z3-C011-SL | 2d | 2027-05-31 | 2027-06-01 | RHD4CZ3C011SL3300, RHD4CZ3C011LV4100 |
| RHD4CZ3C011SL4200 |  | Lean Concrete for Distribution Pillars for Street Lighting Network - (RD-C-1 /1)-Z3-C011-SL | 2d | 2027-06-02 | 2027-06-03 | RHD4CZ3C011SL4100 |
| RHD4CZ3C011SL4300 |  | Installation of Distribution Pillars for Street Lighting Network - (RD-C-1 /1)-Z3-C011-SL | 2d | 2027-07-29 | 2027-07-31 | RHD4CZ3C011SL4200, RHD4CZ3C011SL1400 |
|  | 1808 | **RHD4-02-002-C011-(SL)-Street Lighting Earthing System** |  | 2027-08-01 | 2027-08-02 |  |

| ID | WBS | Task | Duration | Start | Finish | Predecessors |
| --- | --- | --- | --- | --- | --- | --- |
| RHD4CZ3C011SL6100 |  | Installation of Earthing for Lighting Poles and Fedder Pillers for Street Lighting Network - (RD-C-1 /1)-Z3-C011-SL | 2d | 2027-08-01 | 2027-08-02 | RHD4ENMSER2000, RHD4ENMSER2010, RHD4CZ3C011SL4300 |
|  | 1814 | **RHD4-02-002-Z3-C011-Telecommunications Network - TC** |  | 2027-10-09 | 2027-12-01 |  |
|  | 1815 | **RHD4-02-002-C011-(TC)-Telecommunications Ducts** |  | 2027-10-09 | 2027-12-01 |  |
| RHD4CZ3C011TC2100 |  | Excavation of HDPE Ducts for Telecom Network - (RD-C-1 /1)-Z3-C011-TC | 3d | 2027-10-09 | 2027-10-11 | RHD4ENSDZ3APPTC190, RHD4CZ3C011SL4300, RHD4CZ3C083RD5100, RHD4CZ7RA03CCTV1500, RHD4CZ7L015CCTV2100, RHD4CZ7L015RD3200, RHD4CZ8C014ICT5200 |
| RHD4CZ3C011TC2200 |  | Installation of HDPE Ducts for Telecom Network - (RD-C-1 /1)-Z3-C011-TC | 3d | 2027-10-12 | 2027-10-14 | RHD4PRSHLDOSTC1000, RHD4PRSHLSTAGTC1000, RHD4CZ3C011TC2100 |
| RHD4CZ3C011TC2400 |  | Backfilling of HDPE Ducts for Telecom Network - (RD-C-1 /1)-Z3-C011-TC | 3d | 2027-11-29 | 2027-12-01 | RHD4CZ3C011TC2200, RHD4CZ3C011TC5200, RHD4HOASSWL1APP1300, RHD4GNCCTVZ1FT2000, RHD4GNSTZ6FT1000, RHD4GNSTZ8FT1000, RHD4GNSTZ9FT1000 |
|  | 1816 | **RHD4-02-002-C011-(TC)-Telecommunications Manholes** |  | 2027-10-12 | 2027-10-28 |  |
| RHD4CZ3C011TC5100 |  | Excavation for Manholes for Telecom Network - (RD-C-1 /1)-Z3-C011-TC | 6d | 2027-10-12 | 2027-10-18 | RHD4ENSDZ3APPTC190, RHD4CZ3C011TC2100, RHD4CZ7C013RD8100 |
| RHD4CZ3C011TC5200 |  | Installation of Manholes for Telecom Network - (RD-C-1 /1)-Z3-C011-TC | 9d | 2027-10-19 | 2027-10-28 | RHD4PRSHLDOSTC1200, RHD4PRSHLSTAGTC1200, RHD4CZ3C011TC5100, RHD4CZ3C011TC2200 SS |
|  | 1817 | **RHD4-02-002-C011-(TC)-Telecomminications Road Crossings** |  |  |  |  |
|  | 1818 | **RHD4-02-002-Z3-C011-Information and Communication Technologies - ICT** |  | 2027-02-20 | 2027-11-18 |  |
|  | 1819 | **RHD4-02-002-C011-(ICT)-Information and Communication Technologies Ducts** |  | 2027-10-12 | 2027-11-18 |  |
| RHD4CZ3C011ICT2100 |  | Excavation of HDPE Ducts for ICT Network - (RD-C-1 /1)-Z3-C011-ICT | 4d | 2027-10-12 | 2027-10-16 | RHD4ENSDZ3APPICT200, RHD4CZ3C011ICT3400, RHD4CZ3C011TC2100 |
| RHD4CZ3C011ICT2200 |  | Installation of HDPE Ducts for ICT Network - (RD-C-1 /1)-Z3-C011-ICT | 9d | 2027-10-17 | 2027-10-26 | RHD4PRSHLDOSICT1000, RHD4PRSHLSTAGICT1000, RHD4CZ3C011ICT2100 |
| RHD4CZ3C011ICT2400 |  | Backfilling of HDPE Ducts for ICT Network - (RD-C-1 /1)-Z3-C011-ICT | 5d | 2027-11-14 | 2027-11-18 | RHD4CZ3C011ICT2200, RHD4CZ3C011ICT5200 |
|  | 1820 | **RHD4-02-002-C011-(ICT)-Information and Communication Technologies Manholes** |  | 2027-10-17 | 2027-11-13 |  |
| RHD4CZ3C011ICT5100 |  | Excavation for Manholes for ICT Network - (RD-C-1 /1)-Z3-C011-ICT | 12d | 2027-10-17 | 2027-10-30 | RHD4ENSDZ3APPICT200, RHD4CZ3C011ICT2100, RHD4CZ6CH6ST1130 |
| RHD4CZ3C011ICT5200 |  | Installation of Manholes for ICT Network - (RD-C-1 /1)-Z3-C011-ICT | 12d | 2027-10-31 | 2027-11-13 | RHD4PRSHLDOSICT1200, RHD4PRSHLSTAGICT1200, RHD4CZ3C011ICT5100, RHD4CZ9L02CCTV1500 |
|  | 1821 | **RHD4-02-002-C011-(ICT)-Information and Communication Technologies Road Crossings** |  | 2027-02-20 | 2027-03-01 |  |
| RHD4CZ3C011ICT3100 |  | Excavation for Road Crossings for ICT Network - (RD-C-1 /1)-Z3-C011-ICT | 2d | 2027-02-20 | 2027-02-21 | RHD4ENSDZ3APPICT200, RHD4CZ3C011IRR2302, RHD4CZ3C011PT3203, RHD4CZ3C011PT3203 FF |
| RHD4CZ3C011ICT3200 |  | Installation of Road Crossings for ICT Network - (RD-C-1 /1)-Z3-C011-ICT | 2d | 2027-02-23 | 2027-02-24 | RHD4PRSHLDOSICT1100, RHD4PRSHLSTAGICT1100, RHD4CZ3C011ICT3100 |
| RHD4CZ3C011ICT3300 |  | Pouring of Road Crossings for ICT Network - (RD-C-1 /1)-Z3-C011-ICT | 2d | 2027-02-25 | 2027-02-27 | RHD4CZ3C011ICT3200 |
| RHD4CZ3C011ICT3400 |  | Backfilling of Road Crossings for ICT Network - (RD-C-1 /1)-Z3-C011-ICT | 2d | 2027-02-28 | 2027-03-01 | RHD4CZ3C011ICT3300 |
|  | 1809 | **RHD4-02-002-Z3-C011-Landscape Network - LS** |  |  |  |  |
|  | 1810 | **RHD4-02-002-C011-(LS)-Landscape Lighting cables** |  |  |  |  |
|  | 1811 | **RHD4-02-002-C011-(LS)-Landscape Feeder Pillars** |  |  |  |  |
|  | 1812 | **RHD4-02-002-C011-(LS)-Landscape Bollard Poles** |  |  |  |  |
|  | 1813 | **RHD4-02-002-C011-(LS)-Landscape Feeder Pillars Earthing** |  |  |  |  |
|  | 1822 | **RHD4-02-002-Z3-C011-Security Network - CCTV** |  | 2027-08-19 | 2027-12-05 |  |
|  | 1823 | **RHD4-02-002-C011-(CCTV)-Civil Works** |  | 2027-08-19 | 2027-08-28 |  |
| RHD4CZ3C011CCTV2100 |  | Civil Works for Security Network - (RD-C-1 /1)-Z3-C011-CCTV | 8d | 2027-08-19 | 2027-08-28 | RHD4GNSLZ9FT1600, RHD4CZ8C014RD8100 |
|  | 4851 | **RHD4-02-002-C011-(CCTV)-CCTV Poles** |  | 2027-11-13 | 2027-11-30 |  |
| RHD4CZ3C011CCTV1100 |  | Excavation for RC Base for CCTV Poles for Security Network - (RD-C-1 /1)-Z3-C011-CCTV | 2d | 2027-11-13 | 2027-11-14 | RHD4CZ3C011CCTV2100, RHD4CZ8A011RD7100 |
| RHD4CZ3C011CCTV1200 |  | Installation for RC Base for CCTV Poles for Security Network - (RD-C-1 /1)-Z3-C011-CCTV | 2d | 2027-11-15 | 2027-11-16 | RHD4CZ3C011CCTV1100, RHD4CZ7C02RD8100 |
| RHD4CZ3C011CCTV1300 |  | Backfill for RC Base for CCTV Poles for Security Network - (RD-C-1 /1)-Z3-C011-CCTV | 2d | 2027-11-17 | 2027-11-18 | RHD4CZ3C011CCTV1200, RHD4CZ8C014RD7100 |
| RHD4CZ3C011CCTV1400 |  | Installation for CCTV Poles for Security Network - (RD-C-1 /1)-Z3-C011-CCTV | 2d | 2027-11-24 | 2027-11-25 | RHD4CZ3C011CCTV1300, RHD4CZ7C02RD7100, RHD4CZ8RA04RD8100 |
| RHD4CZ3C011CCTV1500 |  | Protection post Installation for CCTV Poles for Security Network - (RD-C-1 /1)-Z3-C011-CCTV | 4d | 2027-11-27 | 2027-11-30 | RHD4CZ3C011CCTV1400 |
|  | 4852 | **RHD4-02-002-C011-(CCTV)-Camera** |  | 2027-11-29 | 2027-11-30 |  |
| RHD4CZ3C011CCTV3100 |  | Installation for Cameras for Security Network - (RD-C-1 /1)-Z3-C011-CCTV | 2d | 2027-11-29 | 2027-11-30 | RHD4CZ3C011CCTV1400, RHD4CZ3C011CCTV4100 |
|  | 4853 | **RHD4-02-002-C011-(CCTV)-Power and Infrastructure** |  | 2027-11-27 | 2027-11-30 |  |
| RHD4CZ3C011CCTV4100 |  | Installation of Power outlet, UPS and midspan for PTZ Camerafor Cameras for Security Network - (RD-C-1 /1)-Z3-C011-CCTV | 2d | 2027-11-27 | 2027-11-28 | RHD4CZ3C011CCTV1400, RHD4CZ3C011ICT5200 |
| RHD4CZ3C011CCTV4200 |  | Short Range Wireless PoP wireless Bridgefor CCTV Poles for Security Network - (RD-C-8 /3)-Z3-C083-CCTV | 2d | 2027-11-29 | 2027-11-30 | RHD4CZ3C011CCTV4100, RHD4CZ3C011ICT2400 |
|  | 4855 | **RHD4-02-002-C011-(CCTV)-CCTV Panels and Components** |  | 2027-12-01 | 2027-12-05 |  |
| RHD4CZ3C011CCTV6100 |  | Installation for CCTV Panels for Security Network - (RD-C-1 /1)-Z3-C011-CCTV | 4d | 2027-12-01 | 2027-12-05 | RHD4CZ3C011CCTV3100, RHD4CZ3C011CCTV1500, RHD4CZ3C011CCTV4200 |
|  | 1839 | **RHD4-02-002-Z3-L122** |  | 2026-08-23 | 2028-02-20 |  |
|  | 1870 | **RHD4-02-002-Z3-L122-Crossings Sewage Network - SWCr** |  |  |  |  |
|  | 1880 | **RHD4-02-002-L122-(SWCr)-MH Works - 1200 mm diameter** |  |  |  |  |
|  | 1873 | **RHD4-02-002-L122-(SWCr)-GRP Pipes - 500 mm diameter** |  |  |  |  |
|  | 1872 | **RHD4-02-002-L122-(SWCr)-GRP Pipes - 400 mm diameter** |  |  |  |  |
|  | 1871 | **RHD4-02-002-L122-(SWCr)-GRP Pipes - 300 mm diameter** |  |  |  |  |
|  | 1878 | **RHD4-02-002-L122-(SWCr)-HDPE Pipes - 400 mm diameter** |  |  |  |  |
|  | 1884 | **RHD4-02-002-L122-(SWCr)-Wash out Chambers** |  |  |  |  |
|  | 1885 | **RHD4-02-002-L122-(SWCr)-Wash out Valves** |  |  |  |  |
|  | 1886 | **RHD4-02-002-L122-(SWCr)-Air Valve Chambers** |  |  |  |  |
|  | 1887 | **RHD4-02-002-L122-(SWCr)-Air Valves** |  |  |  |  |
|  | 1888 | **RHD4-02-002-L122-(SWCr)-Butterfly Valve Chambers** |  |  |  |  |
|  | 1889 | **RHD4-02-002-L122-(SWCr)-Butterfly Valves** |  |  |  |  |
|  | 1914 | **RHD4-02-002-Z3-L122-Crossings Potable Network - PTCr** |  |  |  |  |
|  | 1918 | **RHD4-02-002-L122-(PTCr)-HDPE Pipes - 400 mm diameter** |  |  |  |  |
|  | 1921 | **RHD4-02-002-L122-(PTCr)-Butterfly Valve Chamber** |  |  |  |  |
|  | 1922 | **RHD4-02-002-L122-(PTCr)-Butterfly Valves** |  |  |  |  |
|  | 1961 | **RHD4-02-002-Z3-L122-Crossings Irrigation Network - IRRC** |  |  |  |  |
|  | 1966 | **RHD4-02-002-L122-(IRRC)-HDPE Pipes - 315 mm diameter** |  |  |  |  |
|  | 2018 | **RHD4-02-002-Z3-L122-Road Works - RD** |  | 2026-09-09 | 2028-02-20 |  |
|  | 2019 | **RHD4-02-002-L122-(RD)-Subgrade** |  | 2026-09-09 | 2026-09-14 |  |
| RHD4CZ3L122RD1100 |  | Supply, lay and compaction subgrade compacted thickness 300 mm for Roads - (RD-L-12/2)-Z3-L122-RD | 5d | 2026-09-09 | 2026-09-14 | RHD4ENSDZ3APPEW100, RHD4ENSDZ3APPRD220, RHD4CZ3L122ST1506, RHD4CZ3L122TC3400, RHD4CZ3L122ICT3400 SS |
|  | 2020 | **RHD4-02-002-L122-(RD)-Aggregate Base Course** |  | 2026-09-15 | 2026-09-20 |  |
| RHD4CZ3L122RD2100 |  | Supply, lay and compaction Aggregate base course compacted thickness 300 mmfor Roads - (RD-L-12/2)-Z3-L122-RD | 5d | 2026-09-15 | 2026-09-20 | RHD4PRSHLDOSRD1000, RHD4PRSHLSTAGRD1000, RHD4CZ3L122RD1100 |
|  | 2021 | **RHD4-02-002-L122-(RD)-Bituminous base course Two Layers, including (MC1)&(RC2)** |  | 2026-09-21 | 2027-12-18 |  |
| RHD4CZ3L122RD3100 |  | Supply, lay and Asphaltic base course including Prime Coat (MC1) for 1st Layer - (RD-L-12/2)-Z3-L122-RD | 4d | 2026-09-21 | 2026-09-26 | RHD4PRSHLDOSRD1100, RHD4ENMSASPH2000, RHD4ENMSASPH2010, RHD4PRSHLSTAGRD1100, RHD4CZ3L122RD2100, RHD4CZ7A012RD3100, RHD4CZ5L016RD3100, RHD4CZ7L131RD3100 |

| ID | WBS | Task | Duration | Start | Finish | Predecessors |
| --- | --- | --- | --- | --- | --- | --- |
| RHD4CZ3L122RD3200 |  | Supply, lay and Asphaltic base course including Tack Coat (RC2) for 2nd Layer - (RD-L-12/2)-Z3-L122-RD | 5d | 2027-12-13 | 2027-12-18 | RHD4PRSHLDOSRD1100, RHD4PRSHLSTAGRD1100, RHD4PRSHLSTAGST1701, RHD4PRSHLDOSST1702, RHD4PRLOLSTAGLFS1300, RHD4PRSHLSTAGIRR1000, RHD4PRSHLSTAGSW1406, RHD4PRSHLSTAGSW1408, RHD4PRLOLSTAGLFS1500, RHD4PRSHLSTAGST1702, RHD4PRSHLSTAGSW1401, RHD4PRSHLSTAGPT1000, RHD4CZ3L122RD3100, RHD4CZ3L122CCTV6100 |
|  | 2023 | **RHD4-02-002-L122-(RD)-Precast Concrete Curb** |  | 2027-12-19 | 2027-12-27 |  |
| RHD4CZ3L122RD5100 |  | Supply and installation Precast Concrete Kerb for Roads - (RD-L-12/2)-Z3-L122-RD | 8d | 2027-12-19 | 2027-12-27 | RHD4PRSHLDOSRD1200, RHD4ENMSRD2000, RHD4ENMSRD2010, RHD4PRSHLSTAGRD1200, RHD4CZ3L122RD3200, RHD4GNSTZ7FT1000 |
|  | 2026 | **RHD4-02-002-L122-(RD)-Traffic Signage** |  | 2027-12-28 | 2028-01-04 |  |
| RHD4CZ3L122RD8100 |  | Installation of Traffic Signage for Road Network - (RD-L-12/2)-Z3-L122-RD | 7d | 2027-12-28 | 2028-01-04 | RHD4PRSHLDOSRD1600, RHD4PRSHLSTAGST1400, RHD4PRSHLSTAGRD1600, RHD4CZ3L122RD5100, RHD4CZ3L122TC2400, RHD4CZ3L122ICT2400 |
|  | 2024 | **RHD4-02-002-L122-(RD)-Precast Interlocking Block Pavers** |  | 2028-01-05 | 2028-01-27 |  |
| RHD4CZ3L122RD6100 |  | Interlocking block pavers for sidewalk-footpath for Side walks and Parking areas - (RD-L-12/2)-Z3-L122-RD | 20d | 2028-01-05 | 2028-01-27 | RHD4PRSHLDOSRD1300, RHD4PRSHLDOSRD1400, RHD4ENMSRD2000, RHD4ENMSRD2010, RHD4PRSHLSTAGRD1300, RHD4PRSHLSTAGRD1400, RHD4CZ3L122RD8100, RHD4GNCCTVZ8FT2000, RHD4GNICTZ1FT1900, RHD4CZ9L02RD7100 |
|  | 2022 | **RHD4-02-002-L122-(RD)-Bituminous concrete wearing course including tack coat (RC2)** |  | 2028-01-29 | 2028-02-06 |  |
| RHD4CZ3L122RD4100 |  | Supply, lay and compaction Asphaltic wearing course including tack Coat (RC2)for Road Network - (RD-L-12/2)-Z3-L122-RD | 8d | 2028-01-29 | 2028-02-06 | RHD4CZ3L122RD5100, RHD4CZ3L122RD6100 |
|  | 2025 | **RHD4-02-002-L122-(RD)-Pavement Marking** |  | 2028-02-07 | 2028-02-20 |  |
| RHD4CZ3L122RD7100 |  | Pavement Markings for Road Network - (RD-L-12/2)-Z3-L122-RD | 12d | 2028-02-07 | 2028-02-20 | RHD4PRSHLDOSRD1500, RHD4PRSHLSTAGRD1500, RHD4CZ3L122RD4100 |
|  | 1843 | **RHD4-02-002-Z3-L122-Storm Network - ST** |  | 2026-08-23 | 2026-12-08 |  |
|  | 3743 | **RHD4-02-002-L122-(ST)-GRP Pipes - 1100 mm diameter** |  | 2026-09-10 | 2026-09-21 |  |
| RHD4CZ3L122ST1107 |  | Excavation works for GRP Pipe Line 1100 mm - (RD-L-12 /2)-Z3-L122-ST | 2d | 2026-09-10 | 2026-09-12 | RHD4CZ3L122ST1501 |
| RHD4CZ3L122ST1207 |  | Bedding works for GRP Pipe Line 1100 mm - (RD-L-12 /2)-Z3-L122-ST | 2d | 2026-09-13 | 2026-09-14 | RHD4CZ3L122ST1107 |
| RHD4CZ3L122ST1307 |  | Installing for GRP Pipe Line 1100 mm - (RD-L-12 /2)-Z3-L122-ST | 2d | 2026-09-15 | 2026-09-16 | RHD4CZ3L122ST1207 |
| RHD4CZ3L122ST1407 |  | Primary Test for GRP Pipe Line 1100 mm - (RD-L-12 /2)-Z3-L122-ST | 2d | 2026-09-17 | 2026-09-19 | RHD4CZ3L122ST1307 |
| RHD4CZ3L122ST1507 |  | Backfilling and warning tape works for GRP Pipe Line 1100 mm - (RD-L-12 /2)-Z3-L122-ST | 2d | 2026-09-20 | 2026-09-21 | RHD4CZ3L122ST1407, RHD4CZ3L122ST1506 |
|  | 2039 | **RHD4-02-002-L122-(ST)-GRP Pipes - 1000 mm diameter** |  | 2026-08-25 | 2026-09-05 |  |
| RHD4CZ3L122ST1106 |  | Excavation works for GRP Pipe Line 1000 mm - (RD-L-12 /2)-Z3-L122-ST | 2d | 2026-08-25 | 2026-08-26 | RHD4CZ3L122ST3102 |
| RHD4CZ3L122ST1206 |  | Bedding works for GRP Pipe Line 1000 mm - (RD-L-12 /2)-Z3-L122-ST | 2d | 2026-08-27 | 2026-08-29 | RHD4CZ3L122ST1106 |
| RHD4CZ3L122ST1306 |  | Installing for GRP Pipe Line 1000 mm - (RD-L-12 /2)-Z3-L122-ST | 2d | 2026-08-30 | 2026-08-31 | RHD4CZ3L122ST1206 |
| RHD4CZ3L122ST1406 |  | Primary Test for GRP Pipe Line 1000 mm - (RD-L-12 /2)-Z3-L122-ST | 2d | 2026-09-01 | 2026-09-02 | RHD4CZ3L122ST1306 |
| RHD4CZ3L122ST1506 |  | Backfilling and warning tape works for GRP Pipe Line 1000 mm - (RD-L-12 /2)-Z3-L122-ST | 2d | 2026-09-03 | 2026-09-05 | RHD4CZ3L122ST1406 |
|  | 5252 | **RHD4-02-002-L122-(ST)-GRP Pipes - 700 mm diameter** |  | 2026-08-27 | 2026-09-07 |  |
| RHD4CZ3L122ST1103 |  | Excavation works for GRP Pipe Line 700 mm - (RD-L-12 /2)-Z3-L122-ST | 2d | 2026-08-27 | 2026-08-29 | RHD4CZ3L122ST1106 |
| RHD4CZ3L122ST1203 |  | Bedding works for GRP Pipe Line 700 mm - (RD-L-12 /2)-Z3-L122-ST | 2d | 2026-08-30 | 2026-08-31 | RHD4CZ3L122ST1103 |
| RHD4CZ3L122ST1303 |  | Installing for GRP Pipe Line 700 mm - (RD-L-12 /2)-Z3-L122-ST | 2d | 2026-09-01 | 2026-09-02 | RHD4CZ3L122ST1203 |
| RHD4CZ3L122ST1403 |  | Primary Test for GRP Pipe Line 700 mm - (RD-L-12 /2)-Z3-L122-ST | 2d | 2026-09-03 | 2026-09-05 | RHD4CZ3L122ST1303 |
| RHD4CZ3L122ST1503 |  | Backfilling and warning tape works for GRP Pipe Line 700 mm - (RD-L-12 /2)-Z3-L122-ST | 2d | 2026-09-06 | 2026-09-07 | RHD4CZ3L122ST1403 |
|  | 5250 | **RHD4-02-002-L122-(ST)-GRP Pipes - 500 mm diameter** |  | 2026-08-30 | 2026-09-09 |  |
| RHD4CZ3L122ST1101 |  | Excavation works for GRP Pipe Line 500 mm - (RD-L-12 /2)-Z3-L122-ST | 2d | 2026-08-30 | 2026-08-31 | RHD4CZ3L122ST1103 |
| RHD4CZ3L122ST1201 |  | Bedding works for GRP Pipe Line 500 mm - (RD-L-12 /2)-Z3-L122-ST | 2d | 2026-09-01 | 2026-09-02 | RHD4CZ3L122ST1101 |
| RHD4CZ3L122ST1301 |  | Installing for GRP Pipe Line 500 mm - (RD-L-12 /2)-Z3-L122-ST | 2d | 2026-09-03 | 2026-09-05 | RHD4CZ3L122ST1201 |
| RHD4CZ3L122ST1401 |  | Primary Test for GRP Pipe Line 500 mm - (RD-L-12 /2)-Z3-L122-ST | 2d | 2026-09-06 | 2026-09-07 | RHD4CZ3L122ST1301 |
| RHD4CZ3L122ST1501 |  | Backfilling and warning tape works for GRP Pipe Line 500 mm - (RD-L-12 /2)-Z3-L122-ST | 2d | 2026-09-08 | 2026-09-09 | RHD4CZ3L122ST1401, RHD4CZ3L122ST1503 |
|  | 1862 | **RHD4-02-002-L122-(ST)-MH Works - 2000 mm diameter** |  | 2026-08-23 | 2026-09-26 |  |
| RHD4CZ3L122ST3102 |  | Excavation and PC Blinding works for MH 2000 mm - (RD-L-12/2)-Z3-L122-ST | 2d | 2026-08-23 | 2026-08-24 | RHD4ENSDZ3APPST110, RHD4ENMSST2000, RHD4PRSHLDOSST1301 |
| RHD4CZ3L122ST3202 |  | Installation of Base for MH 2000 mm - (RD-L-12/2)-Z3-L122-ST | 3d | 2026-08-25 | 2026-08-27 | RHD4PRSHLSTAGST1602, RHD4CZ3L122ST3102, RHD4CZ5L016ST7500 |
| RHD4CZ3L122ST3302 |  | MH Ring and C.Slab works and Backfilling works for MH 2000 mm - (RD-L-12/2)-Z3-L122-ST | 5d | 2026-08-29 | 2026-09-02 | RHD4PRSHLDOSST1602, RHD4CZ3L122ST3202 |
| RHD4CZ3L122ST3402 |  | Steel Cover for MH 2000 mm - (RD-L-12/2)-Z3-L122-ST | 2d | 2026-09-21 | 2026-09-22 | RHD4PRSHLDOSST1702, RHD4PRSHLSTAGST1702, RHD4CZ3L122ST3302, RHD4CZ3L122ST1500 |
| RHD4CZ3L122ST3502 |  | Finishing, Benching, Testing works for MH 2000 mm - (RD-L-12/2)-Z3-L122-ST | 2d | 2026-09-24 | 2026-09-26 | RHD4CZ3L122ST3402 |
|  | 1861 | **RHD4-02-002-L122-(ST)-MH Works - 1500 mm diameter** |  | 2026-10-22 | 2026-12-05 |  |
| RHD4CZ3L122ST3101 |  | Excavation and PC Blinding works for MH 1500 mm - (RD-L-12/2)-Z3-L122-ST | 5d | 2026-10-22 | 2026-10-27 | RHD4ENSDZ3APPST110, RHD4ENMSST2000, RHD4CZ3L122ST3102 SS, RHD4CZ5L016SW3501, RHD4CZ3C011RD3100 |
| RHD4CZ3L122ST3201 |  | Installation of Base for MH 1500 mm - (RD-L-12/2)-Z3-L122-ST | 5d | 2026-10-28 | 2026-11-02 | RHD4PRSHLSTAGST1602, RHD4CZ3L122ST3101, RHD4CZ3L122ST3202, RHD4CZ5L016SW3000 |
| RHD4CZ3L122ST3301 |  | MH Ring and C.Slab works and Backfilling works for MH 1500 mm - (RD-L-12/2)-Z3-L122-ST | 5d | 2026-11-03 | 2026-11-08 | RHD4PRSHLDOSST1602, RHD4CZ3L122ST3201, RHD4CZ3L122ST3302, RHD4CTUN1Z5STG21170 |
| RHD4CZ3L122ST3401 |  | Steel Cover for MH 1500 mm - (RD-L-12/2)-Z3-L122-ST | 3d | 2026-11-09 | 2026-11-11 | RHD4PRSHLDOSST1702, RHD4PRSHLSTAGST1702, RHD4CZ3L122ST3301, RHD4CZ3L122ST1500, RHD4CZ3L122ST3402 |
| RHD4CZ3L122ST3501 |  | Finishing, Benching, Testing works for MH 1500 mm - (RD-L-12/2)-Z3-L122-ST | 5d | 2026-11-30 | 2026-12-05 | RHD4CZ3L122ST3401, RHD4CZ3L122ST2500, RHD4CZ3L122ST3502 |
|  | 1860 | **RHD4-02-002-L122-(ST)-MH Works - 1200 mm diameter** |  | 2026-10-28 | 2026-12-08 |  |
| RHD4CZ3L122ST3100 |  | Excavation and PC Blinding works for MH 1200 mm - (RD-L-12/2)-Z3-L122-ST | 5d | 2026-10-28 | 2026-11-02 | RHD4ENSDZ3APPST110, RHD4ENMSST2000, RHD4ENMSST2010, RHD4CZ3L122ST3101 |
| RHD4CZ3L122ST3200 |  | Installation of Base for MH 1200 mm - (RD-L-12/2)-Z3-L122-ST | 5d | 2026-11-03 | 2026-11-08 | RHD4PRSHLSTAGST1602, RHD4CZ3L122ST3100, RHD4CZ3L122ST3201 |
| RHD4CZ3L122ST3300 |  | MH Ring and C.Slab works and Backfilling works for MH 1200 mm - (RD-L-12/2)-Z3-L122-ST | 3d | 2026-11-09 | 2026-11-11 | RHD4PRSHLDOSST1602, RHD4CZ3L122ST3200, RHD4CZ3L122ST3301 |
| RHD4CZ3L122ST3400 |  | Steel Cover for MH 1200 mm - (RD-L-12/2)-Z3-L122-ST | 3d | 2026-11-30 | 2026-12-02 | RHD4PRSHLDOSST1702, RHD4PRSHLSTAGST1702, RHD4CZ3L122ST3300, RHD4CZ3L122ST2500, RHD4CZ3L122ST1500, RHD4CZ3L122ST3401 |
| RHD4CZ3L122ST3500 |  | Finishing, Benching, Testing works for MH 1200 mm - (RD-L-12/2)-Z3-L122-ST | 3d | 2026-12-06 | 2026-12-08 | RHD4CZ3L122ST3400, RHD4CZ3L122ST3501 |
|  | 1852 | **RHD4-02-002-L122-(ST)-GRP Pipes - 1200 mm diameter** |  |  |  |  |
|  | 1849 | **RHD4-02-002-L122-(ST)-GRP Pipes - 900 mm diameter** |  |  |  |  |
|  | 1848 | **RHD4-02-002-L122-(ST)-GRP Pipes - 800 mm diameter** |  | 2026-09-06 | 2026-09-16 |  |
| RHD4CZ3L122ST1104 |  | Excavation works for GRP Pipe Line 800 mm - (RD-L-12/2)-Z3-L122-ST | 2d | 2026-09-06 | 2026-09-07 | RHD4ENSDZ3APPST110, RHD4CZ3L122ST1506 |
| RHD4CZ3L122ST1204 |  | Bedding works for GRP Pipe Line 800 mm - (RD-L-12/2)-Z3-L122-ST | 2d | 2026-09-08 | 2026-09-09 | RHD4CZ3L122ST1104 |
| RHD4CZ3L122ST1304 |  | Installing for GRP Pipe Line 800 mm - (RD-L-12/2)-Z3-L122-ST | 2d | 2026-09-10 | 2026-09-12 | RHD4PRSHLSTAGST1002, RHD4CZ3L122ST1204, RHD4PRSHLDOSST1602, RHD4PRSHLPOST1000, RHD4PRSHLDOSST1008 SS, RHD4PRSHLDOSST1608, RHD4PRSHLDOSST1008, RHD4PRSHLDOSST1604, RHD4PRSHLDOSST1004 |
| RHD4CZ3L122ST1404 |  | Primary Test for GRP Pipe Line 800 mm - (RD-L-12/2)-Z3-L122-ST | 2d | 2026-09-13 | 2026-09-14 | RHD4CZ3L122ST1304 |
| RHD4CZ3L122ST1504 |  | Backfilling and warning tape works for GRP Pipe Line 800 mm - (RD-L-12/2)-Z3-L122-ST | 2d | 2026-09-15 | 2026-09-16 | RHD4CZ3L122ST1404 |
|  | 1844 | **RHD4-02-002-L122-(ST)-GRP Pipes - 400 mm diameter** |  | 2026-09-08 | 2026-09-20 |  |
| RHD4CZ3L122ST1100 |  | Excavation works for GRP Pipe Line 400 mm - (RD-L-12/2)-Z3-L122-ST | 2d | 2026-09-08 | 2026-09-09 | RHD4ENSDZ3APPST110, RHD4CZ3L122ST1104 |
| RHD4CZ3L122ST1200 |  | Bedding works for GRP Pipe Line 400 mm - (RD-L-12/2)-Z3-L122-ST | 2d | 2026-09-10 | 2026-09-12 | RHD4CZ3L122ST1100, RHD4CZ3L122ST1204 |
| RHD4CZ3L122ST1300 |  | Installing for GRP Pipe Line 400 mm - (RD-L-12/2)-Z3-L122-ST | 3d | 2026-09-13 | 2026-09-15 | RHD4PRSHLSTAGST1002, RHD4CZ3L122ST1200, RHD4CZ3L122ST1304, RHD4PRSHLDOSST1602, RHD4PRSHLPOST1000, RHD4PRSHLDOSST1008 SS, RHD4PRSHLDOSST1608, RHD4PRSHLDOSST1008, RHD4PRSHLDOSST1604, RHD4PRSHLDOSST1004 |
| RHD4CZ3L122ST1400 |  | Primary Test for GRP Pipe Line 400 mm - (RD-L-12/2)-Z3-L122-ST | 2d | 2026-09-16 | 2026-09-17 | RHD4CZ3L122ST1300, RHD4CZ3L122ST1404 |
| RHD4CZ3L122ST1500 |  | Backfilling and warning tape works for GRP Pipe Line 400 mm - (RD-L-12/2)-Z3-L122-ST | 2d | 2026-09-19 | 2026-09-20 | RHD4CZ3L122ST1400, RHD4CZ3L122ST1504 |
|  | 1859 | **RHD4-02-002-L122-(ST)-UPVC Pipes - 400 mm diameter** |  |  |  |  |
|  | 1858 | **RHD4-02-002-L122-(ST)-UPVC Pipes - 300 mm diameter** |  | 2026-11-12 | 2026-11-29 |  |

| ID | WBS | Task | Duration | Start | Finish | Predecessors |
| --- | --- | --- | --- | --- | --- | --- |
| RHD4CZ3L122ST2100 |  | Excavation works for UPVC Pipe Line 300 mm - (RD-L-12/2)-Z3-L122-ST | 3d | 2026-11-12 | 2026-11-15 | RHD4ENSDZ3APPST110, RHD4CZ3L122ST3300, RHD4CZ3L122ST3301 |
| RHD4CZ3L122ST2200 |  | Bedding works for UPVC Pipe Line 300 mm - (RD-L-12/2)-Z3-L122-ST | 3d | 2026-11-16 | 2026-11-18 | RHD4CZ3L122ST2100 |
| RHD4CZ3L122ST2300 |  | Installing for UPVC Pipe Line 300 mm - (RD-L-12/2)-Z3-L122-ST | 3d | 2026-11-19 | 2026-11-22 | RHD4PRSHLDOSST1102, RHD4PRSHLSTAGST1102, RHD4PRSHLSTAGSW1007, RHD4CZ3L122ST2200 |
| RHD4CZ3L122ST2400 |  | Primary Test for UPVC Pipe Line 300 mm - (RD-L-12/2)-Z3-L122-ST | 2d | 2026-11-23 | 2026-11-24 | RHD4CZ3L122ST2300 |
| RHD4CZ3L122ST2500 |  | Backfilling and warning tape works for UPVC Pipe Line 300 mm - (RD-L-12/2)-Z3-L122-ST | 4d | 2026-11-25 | 2026-11-29 | RHD4CZ3L122ST2400, RHD4CZ3L122ST6100 |
|  | 1866 | **RHD4-02-002-L122-(ST)-Concrete Encasement** |  | 2026-11-19 | 2026-11-24 |  |
| RHD4CZ3L122ST6100 |  | Pipe Encasement for Storm Pipelines - (RD-L-12/2)-Z3-L122-ST | 5d | 2026-11-19 | 2026-11-24 | RHD4CZ3L122ST2300 SS, RHD4CZ3L122ST2300 FF, RHD4CZ3L122ST2200 |
|  | 1867 | **RHD4-02-002-Z3-L122-Catch Basin - ST** |  | 2026-11-03 | 2026-12-30 |  |
|  | 1868 | **RHD4-02-002-L122-(ST)-Single Catch Basin Works** |  | 2026-11-03 | 2026-12-19 |  |
| RHD4CZ3L122ST7100 |  | Excavation works for Single Catch Basin - (RD-L-12/2)-Z3-L122-ST | 3d | 2026-11-03 | 2026-11-05 | RHD4ENSDZ3APPST110, RHD4CZ3L122ST3301 SS |
| RHD4CZ3L122ST7200 |  | PC Blinding, Installation and Pipe connection for Single Catch Basin - (RD-L-12/2)-Z3-L122-ST | 3d | 2026-11-07 | 2026-11-09 | RHD4CZ3L122ST7100, RHD4CZ2C082ST3501, RHD4CZ9C071ST1501, RHD4CZ2C082SW3500 |
| RHD4CZ3L122ST7300 |  | Rings & C.Slab & Final Backfill for Single Catch Basin - (RD-L-12/2)-Z3-L122-ST | 3d | 2026-11-10 | 2026-11-12 | RHD4PRSHLDOSST1302, RHD4PRSHLSTAGST1302, RHD4CZ3L122ST7200 |
| RHD4CZ3L122ST7400 |  | Steel Cover for Single Catch Basin - (RD-L-12/2)-Z3-L122-ST | 5d | 2026-11-14 | 2026-11-18 | RHD4PRSHLDOSST1702, RHD4CZ3L122ST7300 |
| RHD4CZ3L122ST7500 |  | Finishing and Insulation works for Single Catch Basin - (RD-L-12/2)-Z3-L122-ST | 9d | 2026-12-09 | 2026-12-19 | RHD4CZ3L122ST7400, RHD4CZ3L122ST3500 |
|  | 1869 | **RHD4-02-002-L122-(ST)-Double Catch Basin Works** |  | 2026-12-20 | 2026-12-30 |  |
| RHD4CZ3L122ST8100 |  | Excavation works for Double Catch Basin - (RD-L-12/2)-Z3-L122-ST | 2d | 2026-12-20 | 2026-12-21 | RHD4ENSDZ3APPST110, RHD4CZ3L122ST3300, RHD4CZ3L122ST3301, RHD4CZ3L122ST7500 |
| RHD4CZ3L122ST8200 |  | PC Blinding, Installation and Pipe connection for Double Catch Basin - (RD-L-12/2)-Z3-L122-ST | 2d | 2026-12-22 | 2026-12-23 | RHD4CZ3L122ST8100 |
| RHD4CZ3L122ST8300 |  | Rings & C.Slab & Final Backfillfor Double Catch Basin - (RD-L-12/2)-Z3-L122-ST | 2d | 2026-12-24 | 2026-12-26 | RHD4PRSHLDOSST1302, RHD4PRSHLSTAGST1302, RHD4CZ3L122ST8200, RHD4CZ3L122ST7300 |
| RHD4CZ3L122ST8400 |  | Steel Cover for Double Catch Basin - (RD-L-12/2)-Z3-L122-ST | 2d | 2026-12-27 | 2026-12-28 | RHD4PRSHLDOSST1702, RHD4CZ3L122ST8300, RHD4CZ3L122ST7400 |
| RHD4CZ3L122ST8500 |  | Finishing and Insulation works for Double Catch Basin - (RD-L-12/2)-Z3-L122-ST | 2d | 2026-12-29 | 2026-12-30 | RHD4CZ3L122ST8400, RHD4CZ3L122ST7500 |
|  | 4299 | **RHD4-02-002-Z3-L122-Concrete Box Culvert - ST** |  | 2026-12-31 | 2027-02-02 |  |
|  | 4300 | **RHD4-02-002-L122-(ST)-Concrete Box Culvert** |  | 2026-12-31 | 2027-02-02 |  |
| RHD4CZ3L122ST4100 |  | Excavation works for Box Culvert - (RD-L-12/2)-Z3-L122-ST | 12d | 2026-12-31 | 2027-01-13 | RHD4CZ3L122ST8500, RHD4ENSDZ3APPST110 |
| RHD4CZ3L122ST4200 |  | PC works for Box Culvert - (RD-L-12/2)-Z3-L122-ST | 6d | 2026-12-31 | 2027-01-06 | RHD4CZ3L122ST4100 SS |
| RHD4CZ3L122ST4400 |  | Raft works for Box Culvert - (RD-L-12/2)-Z3-L122-ST | 5d | 2026-12-31 | 2027-01-05 | RHD4CZ3L122ST4200 SS |
| RHD4CZ3L122ST4500 |  | Wall and slab works for Box Culvert - (RD-L-12/2)-Z3-L122-ST | 5d | 2027-01-06 | 2027-01-11 | RHD4CZ3L122ST4400 |
| RHD4CZ3L122ST4700 |  | Backfilling works for Box Culvert - (RD-L-12/2)-Z3-L122-ST | 9d | 2027-01-19 | 2027-01-28 | RHD4CZ3L122ST4500, RHD4CZ3L122ST5300 |
| RHD4CZ3L122ST4600 |  | Insulation and Testing for Box Culvert - (RD-L-12/2)-Z3-L122-ST | 4d | 2027-01-30 | 2027-02-02 | RHD4CZ3L122ST4700, RHD4CZ3L122ST5400, RHD4CZ3L122ST1503 |
|  | 4301 | **RHD4-02-002-L122-(ST)-Concrete Chambers** |  | 2027-01-12 | 2027-01-20 |  |
| RHD4CZ3L122ST5100 |  | Excavation and Bedding for Concrete Chambers - for Box Culvert - (RD-L-12/2)-Z3-L122-ST | 2d | 2027-01-12 | 2027-01-13 | RHD4CZ3L122ST4500 |
| RHD4CZ3L122ST5200 |  | PC works for Concrete Chambers - for Box Culvert - (RD-L-12/2)-Z3-L122-ST | 2d | 2027-01-14 | 2027-01-16 | RHD4CZ3L122ST5100 |
| RHD4CZ3L122ST5300 |  | Installation for Concrete Chambers - for Box Culvert - (RD-L-12/2)-Z3-L122-ST | 2d | 2027-01-17 | 2027-01-18 | RHD4CZ3L122ST5200 |
| RHD4CZ3L122ST5400 |  | Backfilling works for Concrete Chambers - for Box Culvert - (RD-L-12/2)-Z3-L122-ST | 2d | 2027-01-19 | 2027-01-20 | RHD4CZ3L122ST5300 |
|  | 1892 | **RHD4-02-002-Z3-L122-Sewage Network - SW** |  | 2026-12-31 | 2027-02-04 |  |
|  | 577 | **RHD4-02-002-L122-(SW)-MH Works - 1200 mm diameter** |  | 2026-12-31 | 2027-02-04 |  |
| RHD4CZ3L122SW3100 |  | Excavation and PC Blinding works for MH 1200 mm - (RD-L-12 /2)-Z3-L122-SW | 2d | 2026-12-31 | 2027-01-02 | RHD4CZ3L122ST2500, RHD4CZ3L122ST1500, RHD4CZ3L122ST8500 |
| RHD4CZ3L122SW3200 |  | Installation of Base for MH 1200 mm - (RD-L-12 /2)-Z3-L122-SW | 2d | 2027-01-03 | 2027-01-04 | RHD4CZ3L122SW3100 |
| RHD4CZ3L122SW3300 |  | MH Ring and C.Slab works and Backfilling works for MH 1200 mm - (RD-L-12 /2)-Z3-L122-SW | 2d | 2027-01-05 | 2027-01-06 | RHD4CZ3L122SW3200 |
| RHD4CZ3L122SW3400 |  | Steel Cover for MH 1200 mm - (RD-L-12 /2)-Z3-L122-SW | 2d | 2027-01-07 | 2027-01-09 | RHD4CZ3L122SW3300 |
| RHD4CZ3L122SW3500 |  | Finishing, Benching, Testing works for MH 1200 mm - (RD-L-12 /2)-Z3-L122-SW | 2d | 2027-02-03 | 2027-02-04 | RHD4CZ3L122SW3400, RHD4CZ3L122ST4600 |
|  | 1895 | **RHD4-02-002-L122-(SW)-GRP Pipes - 500 mm diameter** |  |  |  |  |
|  | 573 | **RHD4-02-002-L122-(SW)-UPVC Pipes - 200 mm diameter** |  | 2027-01-03 | 2027-01-28 |  |
| RHD4CZ3L122SW2100 |  | Excavation works for UPVC Pipe Line 200 mm - (RD-L-12 /2)-Z3-L122-SW | 2d | 2027-01-03 | 2027-01-04 | RHD4CZ3L122SW3100 |
| RHD4CZ3L122SW2200 |  | Bedding works for UPVC Pipe Line 200 mm - (RD-L-12 /2)-Z3-L122-SW | 2d | 2027-01-05 | 2027-01-06 | RHD4CZ3L122SW2100 |
| RHD4CZ3L122SW2300 |  | Installing for UPVC Pipe Line 200 mm - (RD-L-12 /2)-Z3-L122-SW | 2d | 2027-01-07 | 2027-01-09 | RHD4CZ3L122SW2200 |
| RHD4CZ3L122SW2400 |  | Primary Test for UPVC Pipe Line 200 mm - (RD-L-12 /2)-Z3-L122-SW | 2d | 2027-01-10 | 2027-01-11 | RHD4CZ3L122SW2300 |
| RHD4CZ3L122SW2500 |  | Backfilling and warning tape works for UPVC Pipe Line 200 mm - (RD-L-12 /2)-Z3-L122-SW | 2d | 2027-01-27 | 2027-01-28 | RHD4CZ3L122SW2400, RHD4CZ5L016IRR3200 |
|  | 1894 | **RHD4-02-002-L122-(SW)-GRP Pipes - 400 mm diameter** |  |  |  |  |
|  | 1893 | **RHD4-02-002-L122-(SW)-GRP Pipes - 300 mm diameter** |  |  |  |  |
|  | 1900 | **RHD4-02-002-L122-(SW)-HDPE Pipes - 400 mm diameter** |  |  |  |  |
|  | 1901 | **RHD4-02-002-L122-(SW)-Concrete Encasement** |  |  |  |  |
|  | 1929 | **RHD4-02-002-Z3-L122-Potable Network - PT** |  | 2027-01-30 | 2027-03-28 |  |
|  | 1933 | **RHD4-02-002-L122-(PT)-HDPE Pipes - 400 mm diameter** |  | 2027-01-30 | 2027-03-03 |  |
| RHD4CZ3L122PT1103 |  | Excavation works for HDPE Pipline 400 mm - (RD-L-12/2)-Z3-L122-PT | 8d | 2027-01-30 | 2027-02-07 | RHD4ENSDZ3APPPT130, RHD4ENMSPT2000, RHD4CZ3L122SW2500 |
| RHD4CZ3L122PT1203 |  | Bedding works for HDPE Pipline 400 mm - (RD-L-12/2)-Z3-L122-PT | 5d | 2027-02-08 | 2027-02-13 | RHD4CZ3L122PT1103 |
| RHD4CZ3L122PT1303 |  | Installing for HDPE Pipline 400 mm - (RD-L-12/2)-Z3-L122-PT | 5d | 2027-02-14 | 2027-02-18 | RHD4PRSHLDOSPT1000, RHD4PRSHLSTAGPT1000, RHD4CZ3L122PT1203 |
| RHD4CZ3L122PT1403 |  | Primary Test for HDPE Pipline 400 mm - (RD-L-12/2)-Z3-L122-PT | 5d | 2027-02-20 | 2027-02-25 | RHD4CZ3L122PT1303 |
| RHD4CZ3L122PT1503 |  | Backfilling and warning tape works for HDPE Pipline 400 mm - (RD-L-12/2)-Z3-L122-PT | 5d | 2027-02-27 | 2027-03-03 | RHD4CZ3L122PT1403 |
|  | 1747 | **RHD4-02-002-L122-(PT)-Butterfly Valve Chamber** |  | 2027-02-08 | 2027-02-16 |  |
| RHD4CZ3L122PT2100 |  | Excavation and Bedding for Butterfly Valve Chamber for Potable Water Network - (RD-L-12/2)-Z3-L122-PT | 2d | 2027-02-08 | 2027-02-09 | RHD4CZ3L122PT1103 |
| RHD4CZ3L122PT2200 |  | PC works for Butterfly Valve Chamber for Potable Water Network - (RD-L-12/2)-Z3-L122-PT | 2d | 2027-02-10 | 2027-02-11 | RHD4CZ3L122PT2100 |
| RHD4CZ3L122PT2300 |  | Installation for Butterfly Valve Chamber for Potable Water Network - (RD-L-12/2)-Z3-L122-PT | 2d | 2027-02-13 | 2027-02-14 | RHD4CZ3L122PT2200 |
| RHD4CZ3L122PT2400 |  | Backfilling works for Butterfly Valve Chamber for Potable Water Network - (RD-L-12/2)-Z3-L122-PT | 2d | 2027-02-15 | 2027-02-16 | RHD4CZ3L122PT2300 |
|  | 1748 | **RHD4-02-002-L122-(PT)-Butterfly Valves** |  | 2027-02-15 | 2027-02-18 |  |
| RHD4CZ3L122PT3101 |  | Installation for Butterfly Valves for Potable Water Network - (RD-L-12/2)-Z3-L122-PT | 2d | 2027-02-15 | 2027-02-16 | RHD4CZ3L122PT2300 |
| RHD4CZ3L122PT3201 |  | Stem and Service box for Butterfly Valves for Potable Water Network - (RD-L-12/2)-Z3-L122-PT | 2d | 2027-02-17 | 2027-02-18 | RHD4CZ3L122PT3101, RHD4CZ3L122PT2400 |
|  | 1939 | **RHD4-02-002-L122-(PT)-Wash out Valves** |  | 2027-03-22 | 2027-03-28 |  |
| RHD4CZ3L122PT3102 |  | Installation for Wash out Valves for Potable Water Network - (RD-L-12/2)-Z3-L122-PT | 2d | 2027-03-22 | 2027-03-23 | RHD4PRSHLDOSPT1200, RHD4PRSHLSTAGPT1200, RHD4CZ3L122PT2301 |
| RHD4CZ3L122PT3202 |  | Stem and Service box for Wash out Valves for Potable Water Network - (RD-L-12/2)-Z3-L122-PT | 2d | 2027-03-27 | 2027-03-28 | RHD4PRSHLDOSPT1300, RHD4PRSHLSTAGPT1300, RHD4CZ3L122PT3102, RHD4CZ3L122PT2401 |
|  | 1940 | **RHD4-02-002-L122-(PT)-Air Valve Chambers** |  | 2027-02-08 | 2027-02-16 |  |

| ID | WBS | Task | Duration | Start | Finish | Predecessors |
| --- | --- | --- | --- | --- | --- | --- |
| RHD4CZ3L122PT2102 |  | Excavation and Bedding for Air Valve Chambers for Potable Water Network - (RD-L-12/2)-Z3-L122-PT | 2d | 2027-02-08 | 2027-02-09 | RHD4ENSDZ3APPPT130, RHD4CZ3L122PT1103 |
| RHD4CZ3L122PT2202 |  | PC works for Air Valve Chambers for Potable Water Network - (RD-L-12/2)-Z3-L122-PT | 2d | 2027-02-10 | 2027-02-11 | RHD4CZ3L122PT2102 |
| RHD4CZ3L122PT2302 |  | Installation for Air Valve Chambers for Potable Water Network - (RD-L-12/2)-Z3-L122-PT | 2d | 2027-02-13 | 2027-02-14 | RHD4PRSHLDOSPT1100, RHD4PRSHLDOSPT1400, RHD4PRSHLSTAGPT1100, RHD4PRSHLSTAGPT1400, RHD4CZ3L122PT2202 |
| RHD4CZ3L122PT2402 |  | Backfilling works for Air Valve Chambers for Potable Water Network - (RD-L-12/2)-Z3-L122-PT | 2d | 2027-02-15 | 2027-02-16 | RHD4CZ3L122PT2302 |
|  | 1941 | **RHD4-02-002-L122-(PT)-Air Valves** |  | 2027-02-15 | 2027-02-18 |  |
| RHD4CZ3L122PT3103 |  | Installation for Air Valves for Potable Water Network - (RD-L-12/2)-Z3-L122-PT | 2d | 2027-02-15 | 2027-02-16 | RHD4PRSHLDOSPT1200, RHD4PRSHLSTAGPT1200, RHD4CZ3L122PT2302 |
| RHD4CZ3L122PT3203 |  | Stem and Service box for Air Valves for Potable Water Network - (RD-L-12/2)-Z3-L122-PT | 2d | 2027-02-17 | 2027-02-18 | RHD4PRSHLDOSPT1300, RHD4PRSHLSTAGPT1300, RHD4CZ3L122PT3103, RHD4CZ3L122PT2402 |
|  | 1942 | **RHD4-02-002-L122-(PT)-Fire Hydrant** |  | 2027-03-04 | 2027-03-18 |  |
| RHD4CZ3L122PT4100 |  | Excavation and Bedding and Pipe Installation for Fire Hydrant - (RD-L-12/2)-Z3-L122-PT | 2d | 2027-03-04 | 2027-03-06 | RHD4ENSDZ3APPPT130, RHD4CZ3L122PT1503 |
| RHD4CZ3L122PT4200 |  | Valve Installation for Fire Hydrant - (RD-L-12/2)-Z3-L122-PT | 2d | 2027-03-07 | 2027-03-08 | RHD4CZ3L122PT4100 |
| RHD4CZ3L122PT4300 |  | Stem for Fire Hydrant - (RD-L-12/2)-Z3-L122-PT | 2d | 2027-03-13 | 2027-03-14 | RHD4CZ3L122PT4200 |
| RHD4CZ3L122PT4400 |  | Fire Installation for Fire Hydrant - (RD-L-12/2)-Z3-L122-PT | 2d | 2027-03-15 | 2027-03-16 | RHD4PRSHLDOSPT1500, RHD4PRSHLSTAGPT1500, RHD4CZ3L122PT4300 |
| RHD4CZ3L122PT4500 |  | Protection Barriers for Fire Hydrant - (RD-L-12/2)-Z3-L122-PT | 2d | 2027-03-17 | 2027-03-18 | RHD4CZ3L122PT4400, RHD4CZ3L122PT3203 |
|  | 1943 | **RHD4-02-002-L122-(PT)-Concrete Encasement** |  |  |  |  |
|  | 1938 | **RHD4-02-002-L122-(PT)-Wash out Valve Chambers** |  | 2027-03-04 | 2027-03-25 |  |
| RHD4CZ3L122PT2101 |  | Excavation and Bedding for Wash out Valve Chambers for Potable Water Network - (RD-L-12/2)-Z3-L122-PT | 4d | 2027-03-04 | 2027-03-08 | RHD4ENSDZ3APPPT130, RHD4CZ3L122PT1503 |
| RHD4CZ3L122PT2201 |  | PC works for Wash out Valve Chambers for Potable Water Network - (RD-L-12/2)-Z3-L122-PT | 4d | 2027-03-13 | 2027-03-16 | RHD4CZ3L122PT2101 |
| RHD4CZ3L122PT2301 |  | Installation for Wash out Valve Chambers for Potable Water Network - (RD-L-12/2)-Z3-L122-PT | 4d | 2027-03-17 | 2027-03-21 | RHD4PRSHLDOSPT1100, RHD4PRSHLDOSPT1400, RHD4PRSHLSTAGPT1100, RHD4PRSHLSTAGPT1400, RHD4CZ3L122PT2201 |
| RHD4CZ3L122PT2401 |  | Backfilling works for Wash out Valve Chambers for Potable Water Network - (RD-L-12/2)-Z3-L122-PT | 4d | 2027-03-22 | 2027-03-25 | RHD4CZ3L122PT2301 |
|  | 1944 | **RHD4-02-002-Z3-L122-Irrigation Network - IRR** |  | 2027-02-08 | 2027-04-12 |  |
|  | 1951 | **RHD4-02-002-L122-(IRR)-HDPE Pipes - 450 mm diameter** |  |  |  |  |
|  | 1950 | **RHD4-02-002-L122-(IRR)-HDPE Pipes - 400 mm diameter** |  |  |  |  |
|  | 1949 | **RHD4-02-002-L122-(IRR)-HDPE Pipes - 315 mm diameter** |  | 2027-02-27 | 2027-04-12 |  |
| RHD4CZ3L122IRR1104 |  | Excavation works for HDPE Pipline 315 mm - (RD-L-12/2)-Z3-L122-IRR | 10d | 2027-02-27 | 2027-03-13 | RHD4ENSDZ3APPIRR140, RHD4ENMSRR2000, RHD4CZ3L122PT1403 |
| RHD4CZ3L122IRR1204 |  | Bedding works for HDPE Pipline 315 mm - (RD-L-12/2)-Z3-L122-IRR | 8d | 2027-03-14 | 2027-03-22 | RHD4CZ3L122IRR1104 |
| RHD4CZ3L122IRR1304 |  | Installing for HDPE Pipline 315 mm - (RD-L-12/2)-Z3-L122-IRR | 5d | 2027-03-23 | 2027-03-28 | RHD4PRSHLDOSIRR1000, RHD4PRSHLSTAGIRR1000, RHD4CZ3L122IRR1204 |
| RHD4CZ3L122IRR1404 |  | Primary Test for HDPE Pipline 315 mm - (RD-L-12/2)-Z3-L122-IRR | 5d | 2027-03-29 | 2027-04-03 | RHD4PRSHLDOSTC1000, RHD4PRSHLSTAGTC1000, RHD4CZ3L122IRR1304 |
| RHD4CZ3L122IRR1504 |  | Backfilling and warning tape works for HDPE Pipline 315 mm - (RD-L-12/2)-Z3-L122-IRR | 8d | 2027-04-04 | 2027-04-12 | RHD4CZ3L122IRR1404 |
|  | 1947 | **RHD4-02-002-L122-(IRR)-HDPE Pipes - 200 mm diameter** |  |  |  |  |
|  | 1945 | **RHD4-02-002-L122-(IRR)-HDPE Pipes - 160 mm diameter** |  | 2027-02-08 | 2027-04-01 |  |
| RHD4CZ3L122IRR1100 |  | Excavation works for HDPE Pipline 160 mm - (RD-L-12/2)-Z3-L122-IRR | 2d | 2027-02-08 | 2027-02-09 | RHD4ENSDZ3APPIRR140, RHD4ENMSRR2000, RHD4CZ3L122PT1103 |
| RHD4CZ3L122IRR1200 |  | Bedding works for HDPE Pipline 160 mm - (RD-L-12/2)-Z3-L122-IRR | 2d | 2027-02-10 | 2027-02-11 | RHD4CZ3L122IRR1100 |
| RHD4CZ3L122IRR1300 |  | Installing for HDPE Pipline 160 mm - (RD-L-12/2)-Z3-L122-IRR | 2d | 2027-02-13 | 2027-02-14 | RHD4PRSHLDOSIRR1000, RHD4PRSHLSTAGIRR1000, RHD4CZ3L122IRR1200 |
| RHD4CZ3L122IRR1400 |  | Primary Test for HDPE Pipline 160 mm - (RD-L-12/2)-Z3-L122-IRR | 2d | 2027-03-29 | 2027-03-30 | RHD4CZ3L122IRR1300, RHD4CZ3L122IRR3100 |
| RHD4CZ3L122IRR1500 |  | Backfilling and warning tape works for HDPE Pipline 160 mm - (RD-L-12/2)-Z3-L122-IRR | 2d | 2027-03-31 | 2027-04-01 | RHD4CZ3L122IRR1400 |
|  | 1953 | **RHD4-02-002-L122-(IRR)-Gate Valves (Direct Buried)** |  | 2027-03-25 | 2027-03-31 |  |
| RHD4CZ3L122IRR3100 |  | Installation for Direct Buried Gate Valves - (RD-L-12/2)-Z3-L122-IRR | 3d | 2027-03-25 | 2027-03-28 | RHD4PRSHLDOSIRR1100, RHD4PRSHLSTAGIRR1100, RHD4CZ3L122IRR1304 SS, RHD4CZ3L122IRR1304 FF, RHD4CZ3L122IRR1300 SS, RHD4CZ3L122IRR1300 FF |
| RHD4CZ3L122IRR3200 |  | Stem and Service box for Direct Buried Gate Valves - (RD-L-12/2)-Z3-L122-IRR | 3d | 2027-03-29 | 2027-03-31 | RHD4PRSHLDOSIRR1300, RHD4PRSHLSTAGIRR1300, RHD4CZ3L122IRR3100 |
|  | 1956 | **RHD4-02-002-L122-(IRR)-Wash out Chamber** |  | 2027-02-10 | 2027-02-18 |  |
| RHD4CZ3L122IRR2101 |  | Excavation and Bedding for Wash out Chamber for Irrigation Network - (RD-L-12/2)-Z3-L122-IRR | 2d | 2027-02-10 | 2027-02-11 | RHD4ENSDZ3APPIRR140, RHD4CZ3L122IRR1100 |
| RHD4CZ3L122IRR2201 |  | PC works for Wash out Chamber for Irrigation Network - (RD-L-12/2)-Z3-L122-IRR | 2d | 2027-02-13 | 2027-02-14 | RHD4CZ3L122IRR2101 |
| RHD4CZ3L122IRR2301 |  | Installation for Wash out Chamber for Irrigation Network - (RD-L-12/2)-Z3-L122-IRR | 2d | 2027-02-15 | 2027-02-16 | RHD4PRSHLDOSIRR1200, RHD4PRSHLDOSIRR1400, RHD4PRSHLSTAGIRR1200, RHD4PRSHLSTAGIRR1400, RHD4CZ3L122IRR2201 |
| RHD4CZ3L122IRR2401 |  | Backfilling works for Wash out Chamber for Irrigation Network - (RD-L-12/2)-Z3-L122-IRR | 2d | 2027-02-17 | 2027-02-18 | RHD4CZ3L122IRR2301 |
|  | 1957 | **RHD4-02-002-L122-(IRR)-Wash out Valves** |  | 2027-02-17 | 2027-02-21 |  |
| RHD4CZ3L122IRR3102 |  | Installation for Wash out Valve for Irrigation Network - (RD-L-12/2)-Z3-L122-IRR | 2d | 2027-02-17 | 2027-02-18 | RHD4PRSHLDOSIRR1100, RHD4PRSHLSTAGIRR1100, RHD4CZ3L122IRR2301 |
| RHD4CZ3L122IRR3202 |  | Stem and Service box for Wash out Valve for Irrigation Network - (RD-L-12/2)-Z3-L122-IRR | 2d | 2027-02-20 | 2027-02-21 | RHD4PRSHLDOSIRR1300, RHD4PRSHLSTAGIRR1300, RHD4CZ3L122IRR3102, RHD4CZ3L122IRR2401 |
|  | 1978 | **RHD4-02-002-Z3-L122-Medium Voltage Network - MV** |  | 2027-02-07 | 2027-04-07 |  |
|  | 1979 | **RHD4-02-002-L122-(MV)-Medium Voltage cable trench** |  | 2027-02-07 | 2027-03-24 |  |
| RHD4CZ3L122MV1100 |  | Excavation for Medium Voltage Trench - (RD-L-12/2)-Z3-L122-MV | 8d | 2027-02-07 | 2027-02-15 | RHD4ENSDZ3APPMV150, RHD4CZ3L122RD3100, RHD4CZ1C081MV4200 |
| RHD4CZ3L122MV1200 |  | Trench Backfilling for Medium Voltage Network - (RD-L-12/2)-Z3-L122-MV | 8d | 2027-03-16 | 2027-03-24 | RHD4CZ3L122MV3200, RHD4CZ3L122MV3101 |
|  | 1980 | **RHD4-02-002-L122-(MV)-Medium Voltage duct banks** |  | 2027-02-16 | 2027-03-08 |  |
| RHD4CZ3L122MV2100 |  | Excavation of Duct Banks for Medium Voltage Network - (RD-L-12/2)-Z3-L122-MV | 4d | 2027-02-16 | 2027-02-20 | RHD4ENSDZ3APPMV150, RHD4CZ3L122MV1100 |
| RHD4CZ3L122MV2200 |  | Installation of Duct Banks for Medium Voltage Network - (RD-L-12/2)-Z3-L122-MV | 6d | 2027-02-21 | 2027-02-28 | RHD4PRSHLDOSMV1000, RHD4PRSHLSTAGMV1000, RHD4CZ3L122MV2100 |
| RHD4CZ3L122MV2300 |  | Pouring of Duct Banks for Medium Voltage Network - (RD-L-12/2)-Z3-L122-MV | 4d | 2027-03-01 | 2027-03-04 | RHD4CZ3L122MV2200 |
| RHD4CZ3L122MV2400 |  | Backfilling of Duct Banks for Medium Voltage Network - (RD-L-12/2)-Z3-L122-MV | 3d | 2027-03-06 | 2027-03-08 | RHD4CZ3L122MV2300 |
|  | 1981 | **RHD4-02-002-L122-(MV)-Medium Voltage cables 3Cx 500 mm²** |  | 2027-02-16 | 2027-04-07 |  |
| RHD4CZ3L122MV3100 |  | Installation of Medium Voltage Cables 3Cx 500 mm² - (RD-L-12/2)-Z3-L122-MV | 10d | 2027-02-16 | 2027-02-28 | RHD4PRSHLDOSMV1100, RHD4ENMSMV2000, RHD4ENMSMV2010, RHD4PRSHLSTAGMV1100, RHD4CZ3L122MV1100 |
| RHD4CZ3L122MV3200 |  | Joints Installation of Medium Voltage Cables 3Cx 500 mm² - (RD-L-12/2)-Z3-L122-MV | 10d | 2027-03-01 | 2027-03-15 | RHD4PRSHLDOSMV1300, RHD4PRSHLSTAGMV1300, RHD4CZ3L122MV3100 |
| RHD4CZ3L122MV3300 |  | Testing of Medium Voltage Cables 3Cx 500 mm² - (RD-L-12/2)-Z3-L122-MV | 10d | 2027-03-25 | 2027-04-05 | RHD4CZ3L122MV3200, RHD4CZ3L122MV1200, RHD4CZ3L122MV2400 |
| RHD4CZ3L122MV3400 |  | Termination of Medium Voltage Cables 3Cx 500 mm² - (RD-L-12/2)-Z3-L122-MV | 2d | 2027-04-06 | 2027-04-07 | RHD4CZ3L122MV3300, RHD4CZ3L122MV5400 |
|  | 1982 | **RHD4-02-002-L122-(MV)-Medium Voltage cables 3Cx 50 mm²** |  | 2027-02-16 | 2027-04-01 |  |
| RHD4CZ3L122MV3101 |  | Installation of Medium Voltage Cables 3Cx 50 mm² - (RD-L-12/2)-Z3-L122-MV | 2d | 2027-02-16 | 2027-02-17 | RHD4PRSHLDOSMV1200, RHD4ENMSMV2000, RHD4ENMSMV2010, RHD4PRSHLSTAGMV1200, RHD4CZ3L122MV1100 |
| RHD4CZ3L122MV3301 |  | Testing of Medium Voltage Cables 3Cx 50 mm² - (RD-L-12/2)-Z3-L122-MV | 2d | 2027-03-25 | 2027-03-27 | RHD4CZ3L122MV3101, RHD4CZ3L122MV1200 |
| RHD4CZ3L122MV3401 |  | Termination of Medium Voltage Cables 3Cx 50 mm² - (RD-L-12/2)-Z3-L122-MV | 5d | 2027-03-28 | 2027-04-01 | RHD4CZ3L122MV3301, RHD4CZ3L122MV5400 |
|  | 1984 | **RHD4-02-002-L122-(MV)-Unit Substations** |  | 2027-02-16 | 2027-03-03 |  |
| RHD4CZ3L122MV5100 |  | Excavation for Unit Substations for Medium Voltage Network - (RD-L-12/2)-Z3-L122-MV | 2d | 2027-02-16 | 2027-02-17 | RHD4ENSDZ3APPMV150, RHD4CZ3L122MV1100 |
| RHD4CZ3L122MV5200 |  | Concrete Base Placement for Unit Substations for Medium Voltage Network - (RD-L-12/2)-Z3-L122-MV | 2d | 2027-02-18 | 2027-02-20 | RHD4CZ3L122MV5100 |
| RHD4CZ3L122MV5300 |  | Installation for Fences and doors for Medium Voltage Network - (RD-L-12/2)-Z3-L122-MV | 5d | 2027-02-21 | 2027-02-27 | RHD4CZ3L122MV5200 |
| RHD4CZ3L122MV5400 |  | Installation for Unit Substations for Medium Voltage Network - (RD-L-12/2)-Z3-L122-MV | 4d | 2027-02-28 | 2027-03-03 | RHD4PRLOLSTAGMV1601, RHD4PRLOLSTAGMV1602, RHD4CZ3L122MV5300 |
|  | 5388 | **RHD4-02-002-L122-(MV)-Normally open Point (Outdoor Type)** |  |  |  |  |

| ID | WBS | Task | Duration | Start | Finish | Predecessors |
| --- | --- | --- | --- | --- | --- | --- |
|  | 1985 | **RHD4-02-002-Z3-L122-Low Voltage Network - LV** |  | 2027-03-27 | 2027-05-24 |  |
|  | 1986 | **RHD4-02-002-L122-(LV)-Low Voltage duct banks** |  | 2027-03-27 | 2027-04-14 |  |
| RHD4CZ3L122LV2100 |  | Excavation of Duct Banks for Low Voltage Network - (RD-L-12/2)-Z3-L122-LV | 2d | 2027-03-27 | 2027-03-28 | RHD4ENSDZ3APPLV160, RHD4CZ3L122RW3002, RHD4CZ3L122PT2401 |
| RHD4CZ3L122LV2200 |  | Installation of Duct Banks for Low Voltage Network - (RD-L-12/2)-Z3-L122-LV | 2d | 2027-03-29 | 2027-03-30 | RHD4PRSHLDOSLV1000, RHD4PRSHLSTAGLV1000, RHD4CZ3L122LV2100 |
| RHD4CZ3L122LV2300 |  | Pouring of Duct Banks for Low Voltage Network - (RD-L-12/2)-Z3-L122-LV | 6d | 2027-03-31 | 2027-04-06 | RHD4CZ3L122LV2200 |
| RHD4CZ3L122LV2400 |  | Backfilling of Duct Banks for Low Voltage Network - (RD-L-12/2)-Z3-L122-LV | 7d | 2027-04-07 | 2027-04-14 | RHD4CZ3L122LV2300, RHD4CZ3L122IRR3200 |
|  | 1989 | **RHD4-02-002-L122-(LV)-Low Voltage Distribution Pillars** |  | 2027-05-11 | 2027-05-24 |  |
| RHD4CZ3L122LV4100 |  | Leveling for Distribution Pillars for Low Voltage Network - (RD-L-12/2)-Z3-L122-LV | 3d | 2027-05-11 | 2027-05-13 | RHD4CZ3L122LV3300, RHD4CZ3L122IRR1504 |
| RHD4CZ3L122LV4200 |  | Lean Concrete for Distribution Pillars for Low Voltage Network - (RD-L-12/2)-Z3-L122-LV | 2d | 2027-05-19 | 2027-05-20 | RHD4CZ3L122LV4100 |
| RHD4CZ3L122LV4300 |  | Installation of Distribution Pillars for Low Voltage Network - (RD-L-12/2)-Z3-L122-LV | 3d | 2027-05-22 | 2027-05-24 | RHD4PRSHLDOSLV1200, RHD4PRSHLDOSLV1300, RHD4PRSHLSTAGLV1200, RHD4PRSHLSTAGLV1300, RHD4CZ3L122LV4200 |
|  | 1990 | **RHD4-02-002-L122-(LV)-Low Voltage Distribution Pillars Earthing** |  |  |  |  |
|  | 4257 | **RHD4-02-002-L122-(LV)-Low Voltage Drawpit** |  | 2027-03-27 | 2027-03-30 |  |
| RHD4CZ3L122LV5100 |  | Excavation of Drawpit size 900x900x1000mm for Low Voltage Network - (RD-L-12/2)-Z3-L122-LV | 2d | 2027-03-27 | 2027-03-28 | RHD4CZ3L122LV2100 SS, RHD4CZ3L122MV5400 |
| RHD4CZ3L122LV5200 |  | Installation of Drawpit size 900x900x1000mm for Low Voltage Network - (RD-L-12/2)-Z3-L122-LV | 2d | 2027-03-29 | 2027-03-30 | RHD4CZ3L122LV5100, RHD4CZ3L122SW3500 |
|  | 1988 | **RHD4-02-002-L122-(LV)-Low Voltage cables** |  | 2027-04-15 | 2027-05-19 |  |
| RHD4CZ3L122LV3100 |  | Excavation for Low Voltage Cables for Low Voltage Network - (RD-L-12/2)-Z3-L122-LV | 8d | 2027-04-15 | 2027-04-24 | RHD4ENSDZ3APPLV160, RHD4CZ3L122LV2400, RHD4CZ3L122MV1200, RHD4CZ3L122MV5400, RHD4CZ3L122MV3400, RHD4CZ3L122MV3401 |
| RHD4CZ3L122LV3200 |  | Cable Laying of Low Voltage Cables for Low Voltage Network - (RD-L-12/2)-Z3-L122-LV | 7d | 2027-04-25 | 2027-05-02 | RHD4PRSHLDOSLV1100, RHD4ENMSLV2000, RHD4ENMSLV2010, RHD4PRSHLSTAGLV1100, RHD4CZ3L122LV3100 |
| RHD4CZ3L122LV3300 |  | Warning tape and Backfill for Low Voltage Cables for Low Voltage Network - (RD-L-12/2)-Z3-L122-LV | 7d | 2027-05-03 | 2027-05-10 | RHD4CZ3L122LV3200 |
| RHD4CZ3L122LV3400 |  | Testing of Low Voltage Cables for Low Voltage Network - (RD-L-12/2)-Z3-L122-LV | 4d | 2027-05-11 | 2027-05-19 | RHD4CZ3L122LV3300, RHD4CZ3C083LV3400 |
|  | 1991 | **RHD4-02-002-Z3-L122-Street Lighting Network - SL** |  | 2027-03-27 | 2027-12-11 |  |
|  | 1994 | **RHD4-02-002-L122-(SL)-Street Lighting cables** |  | 2027-09-30 | 2027-11-25 |  |
| RHD4CZ3L122SL3100 |  | Excavation for Street Lighting Cables for Street Lighting Network - (RD-L-12/2)-Z3-L122-SL | 15d | 2027-09-30 | 2027-10-17 | RHD4ENSDZ3APPSL170, RHD4CZ3L122MV3401, RHD4CZ3L122MV3400, RHD4CZ3L122SL1300 |
| RHD4CZ3L122SL3200 |  | Cable Laying of Street Lighting Cables for Street Lighting Network - (RD-L-12/2)-Z3-L122-SL | 13d | 2027-10-18 | 2027-11-01 | RHD4PRSHLDOSSL1100, RHD4ENMSSL2000, RHD4ENMSSL2010, RHD4PRSHLSTAGSL1100, RHD4CZ3L122SL3100 |
| RHD4CZ3L122SL3300 |  | Warning tape and Backfill for Street Lighting Cables for Street Lighting Network - (RD-L-12/2)-Z3-L122-SL | 13d | 2027-11-02 | 2027-11-16 | RHD4CZ3L122SL3200 |
| RHD4CZ3L122SL3400 |  | Testing of Street Lighting Cables for Street Lighting Network - (RD-L-12/2)-Z3-L122-SL | 8d | 2027-11-17 | 2027-11-25 | RHD4CZ3L122SL3300, RHD4CZ3L122LV3400 |
|  | 1997 | **RHD4-02-002-L122-(SL)-Street Lighting Earthing System** |  | 2027-11-30 | 2027-12-01 |  |
| RHD4CZ3L122SL6100 |  | Installation of Earthing for Lighting Poles and Fedder Pillers for Street Lighting Network - (RD-L-12/2)-Z3-L122-SL | 2d | 2027-11-30 | 2027-12-01 | RHD4ENMSER2000, RHD4ENMSER2010, RHD4CZ3L122SL1400 |
|  | 5019 | **RHD4-02-002-L122-(SL)-Street Lighting duct banks** |  | 2027-03-27 | 2027-04-14 |  |
| RHD4CZ3L122SL2100 |  | Excavation of Duct Banks for Street Lighting Network - (RD-L-12/2)-Z3-L122-SL | 3d | 2027-03-27 | 2027-03-29 | RHD4CZ3L122PT2401 |
| RHD4CZ3L122SL2200 |  | Installation of Duct Banks for Street Lighting Network - (RD-L-12/2)-Z3-L122-SL | 4d | 2027-03-30 | 2027-04-03 | RHD4CZ3L122SL2100 |
| RHD4CZ3L122SL2300 |  | Pouring of Duct Banks for Street Lighting Network - (RD-L-12/2)-Z3-L122-SL | 5d | 2027-04-04 | 2027-04-08 | RHD4CZ3L122SL2200 |
| RHD4CZ3L122SL2400 |  | Backfilling of Duct Banks for Street Lighting Network - (RD-L-12/2)-Z3-L122-SL | 5d | 2027-04-10 | 2027-04-14 | RHD4CZ3L122SL2300 |
|  | 5020 | **RHD4-02-002-L122-(SL)-Street Lighting Drawpit** |  | 2027-04-10 | 2027-04-18 |  |
| RHD4CZ3L122SL5100 |  | Excavation of Drawpit size 600x600x900mm for Street Lighting Network - (RD-L-12/2)-Z3-L122-SL | 2d | 2027-04-10 | 2027-04-11 | RHD4CZ3L122SL2300, RHD4CZ3L122MV5400 |
| RHD4CZ3L122SL5200 |  | Installation of Drawpit size 600x600x900mm for Street Lighting Network - (RD-L-12/2)-Z3-L122-SL | 6d | 2027-04-12 | 2027-04-18 | RHD4CZ3L122SL5100, RHD4CZ3L122MV5400 |
|  | 1995 | **RHD4-02-002-L122-(SL)-Street Lighting Poles** |  | 2027-04-03 | 2027-12-11 |  |
| RHD4CZ3L122SL1100 |  | Excavation for RC Base for Lighting Poles for Street Lighting Network - (RD-L-12/2)-Z3-L122-SL | 8d | 2027-04-03 | 2027-04-11 | RHD4ENSDZ3APPSL170, RHD4CZ3L122MV1200, RHD4CZ3L122MV5400, RHD4CZ3L122IRR1500 |
| RHD4CZ3L122SL1200 |  | Installation for RC Base for Lighting Poles for Street Lighting Network - (RD-L-12/2)-Z3-L122-SL | 8d | 2027-09-11 | 2027-09-19 | RHD4CZ3L122SL1100, RHD4CZ3L122SL5200, RHD4CSWL1B07D151214 SS, RHD4CZ2L102RD7100, RHD4CZ7C013RD8100 |
| RHD4CZ3L122SL1300 |  | Backfill for RC Base for Lighting Poles for Street Lighting Network - (RD-L-12/2)-Z3-L122-SL | 8d | 2027-09-20 | 2027-09-29 | RHD4CZ9L02RD7100, RHD4CZ3L122SL1200, RHD4CZ4L09ICT2400 |
| RHD4CZ3L122SL1400 |  | Installation for Lighting Poles for Street Lighting Network - (RD-L-12/2)-Z3-L122-SL | 11d | 2027-11-17 | 2027-11-29 | RHD4PRSHLDOSSL1200, RHD4ENMSSL2000, RHD4ENMSSL2010, RHD4PRSHLSTAGSL1200, RHD4CZ3L122SL1300, RHD4CZ3L122SL3400 SS |
| RHD4CZ3L122SL1500 |  | Luminaire Installation for Lighting Poles for Street Lighting Network - (RD-L-12/2)-Z3-L122-SL | 8d | 2027-12-02 | 2027-12-11 | RHD4PRSHLDOSSL1300, RHD4PRSHLSTAGSL1300, RHD4CZ3L122SL1400, RHD4CZ3L122SL6100 |
|  | 2003 | **RHD4-02-002-Z3-L122-Telecommunications Network - TC** |  | 2026-08-25 | 2027-11-09 |  |
|  | 2004 | **RHD4-02-002-L122-(TC)-Telecommunications Ducts** |  | 2027-09-30 | 2027-11-09 |  |
| RHD4CZ3L122TC2100 |  | Excavation of HDPE Ducts for Telecom Network - (RD-L-12/2)-Z3-L122-TC | 7d | 2027-09-30 | 2027-10-07 | RHD4ENSDZ3APPTC190, RHD4CZ3L122TC3400, RHD4CZ3L122SL1300 |
| RHD4CZ3L122TC2200 |  | Installation of HDPE Ducts for Telecom Network - (RD-L-12/2)-Z3-L122-TC | 11d | 2027-10-09 | 2027-10-20 | RHD4PRSHLDOSTC1000, RHD4PRSHLSTAGTC1000, RHD4CZ3L122TC2100 |
| RHD4CZ3L122TC2400 |  | Backfilling of HDPE Ducts for Telecom Network - (RD-L-12/2)-Z3-L122-TC | 8d | 2027-11-01 | 2027-11-09 | RHD4CZ3L122TC2200, RHD4CZ3L122TC5200, RHD4GNSLZ7FT1600, RHD4CZ7RA03CCTV6100, RHD4CZ4L014CCTV6100, RHD4CZ5L08RD7100 |
|  | 2005 | **RHD4-02-002-L122-(TC)-Telecommunications Manholes** |  | 2027-10-09 | 2027-10-31 |  |
| RHD4CZ3L122TC5100 |  | Excavation for Manholes for Telecom Network - (RD-L-12/2)-Z3-L122-TC | 8d | 2027-10-09 | 2027-10-17 | RHD4ENSDZ3APPTC190, RHD4CZ3L122TC2100, RHD4CZ7A012RD5100, RHD4CZ9L06RD7100 |
| RHD4CZ3L122TC5200 |  | Installation of Manholes for Telecom Network - (RD-L-12/2)-Z3-L122-TC | 8d | 2027-10-23 | 2027-10-31 | RHD4PRSHLDOSTC1200, RHD4PRSHLSTAGTC1200, RHD4CZ3L122TC5100, RHD4CZ3L122TC2200 SS, RHD4CSTL1B07D151185 |
|  | 2006 | **RHD4-02-002-L122-(TC)-Telecomminications Road Crossings** |  | 2026-08-25 | 2026-09-06 |  |
| RHD4CZ3L122TC3100 |  | Excavation for Road Crossings for Telecom Network - (RD-L-12/2)-Z3-L122-TC | 2d | 2026-08-25 | 2026-08-26 | RHD4ENSDZ3APPTC190, RHD4CZ3L122ST3102 |
| RHD4CZ3L122TC3200 |  | Installation of Road Crossings for Telecom Network - (RD-L-12/2)-Z3-L122-TC | 2d | 2026-08-27 | 2026-08-29 | RHD4PRSHLDOSTC1100, RHD4PRSHLSTAGTC1100, RHD4CZ3L122TC3100 |
| RHD4CZ3L122TC3300 |  | Pouring of Road Crossings for Telecom Network - (RD-L-12/2)-Z3-L122-TC | 2d | 2026-08-30 | 2026-08-31 | RHD4CZ3L122TC3200 |
| RHD4CZ3L122TC3400 |  | Backfilling of Road Crossings for Telecom Network - (RD-L-12/2)-Z3-L122-TC | 5d | 2026-09-01 | 2026-09-06 | RHD4CZ3L122TC3300 |
|  | 2007 | **RHD4-02-002-Z3-L122-Information and Communication Technologies - ICT** |  | 2026-08-27 | 2026-11-21 |  |
|  | 2008 | **RHD4-02-002-L122-(ICT)-Information and Communication Technologies Ducts** |  | 2026-09-16 | 2026-11-21 |  |
| RHD4CZ3L122ICT2100 |  | Excavation of HDPE Ducts for ICT Network - (RD-L-12/2)-Z3-L122-ICT | 20d | 2026-09-16 | 2026-10-10 | RHD4ENSDZ3APPICT200, RHD4CZ3L122ICT3400 |
| RHD4CZ3L122ICT2200 |  | Installation of HDPE Ducts for ICT Network - (RD-L-12/2)-Z3-L122-ICT | 16d | 2026-10-11 | 2026-10-28 | RHD4PRSHLDOSICT1000, RHD4PRSHLSTAGICT1000, RHD4CZ3L122ICT2100 |
| RHD4CZ3L122ICT2400 |  | Backfilling of HDPE Ducts for ICT Network - (RD-L-12/2)-Z3-L122-ICT | 20d | 2026-10-29 | 2026-11-21 | RHD4CZ3L122ICT2200, RHD4CZ3L122ICT5200 |
|  | 2009 | **RHD4-02-002-L122-(ICT)-Information and Communication Technologies Manholes** |  | 2026-10-11 | 2026-10-28 |  |
| RHD4CZ3L122ICT5100 |  | Excavation for Manholes for ICT Network - (RD-L-12/2)-Z3-L122-ICT | 8d | 2026-10-11 | 2026-10-19 | RHD4ENSDZ3APPICT200, RHD4CZ3L122ICT2100 |
| RHD4CZ3L122ICT5200 |  | Installation of Manholes for ICT Network - (RD-L-12/2)-Z3-L122-ICT | 8d | 2026-10-20 | 2026-10-28 | RHD4PRSHLDOSICT1200, RHD4PRSHLSTAGICT1200, RHD4CZ3L122ICT5100 |
|  | 2010 | **RHD4-02-002-L122-(ICT)-Information and Communication Technologies Road Crossings** |  | 2026-08-27 | 2026-09-15 |  |
| RHD4CZ3L122ICT3100 |  | Excavation for Road Crossings for ICT Network - (RD-L-12/2)-Z3-L122-ICT | 4d | 2026-08-27 | 2026-08-31 | RHD4ENSDZ3APPICT200, RHD4CZ3L122TC3100 |
| RHD4CZ3L122ICT3200 |  | Installation of Road Crossings for ICT Network - (RD-L-12/2)-Z3-L122-ICT | 2d | 2026-09-01 | 2026-09-02 | RHD4PRSHLDOSICT1100, RHD4PRSHLSTAGICT1100, RHD4CZ3L122ICT3100, RHD4CZ3L122TC3200 |
| RHD4CZ3L122ICT3300 |  | Pouring of Road Crossings for ICT Network - (RD-L-12/2)-Z3-L122-ICT | 5d | 2026-09-03 | 2026-09-08 | RHD4CZ3L122ICT3200, RHD4CZ3L122TC3300 |
| RHD4CZ3L122ICT3400 |  | Backfilling of Road Crossings for ICT Network - (RD-L-12/2)-Z3-L122-ICT | 6d | 2026-09-09 | 2026-09-15 | RHD4CZ3L122ICT3300, RHD4CZ3L122TC3400 |
|  | 1998 | **RHD4-02-002-Z3-L122-Landscape Network - LS** |  |  |  |  |
|  | 1999 | **RHD4-02-002-L122-(LS)-Landscape Lighting cables** |  |  |  |  |
|  | 2000 | **RHD4-02-002-L122-(LS)-Landscape Feeder Pillars** |  |  |  |  |

| ID | WBS | Task | Duration | Start | Finish | Predecessors |
| --- | --- | --- | --- | --- | --- | --- |
|  | 2001 | **RHD4-02-002-L122-(LS)-Landscape Bollard Poles** |  |  |  |  |
|  | 2002 | **RHD4-02-002-L122-(LS)-Landscape Feeder Pillars Earthing** |  |  |  |  |
|  | 2011 | **RHD4-02-002-Z3-L122-Security Network - CCTV** |  | 2027-11-15 | 2027-12-12 |  |
|  | 2012 | **RHD4-02-002-L122-(CCTV)-Civil Works** |  | 2027-11-15 | 2027-11-20 |  |
| RHD4CZ3L122CCTV2100 |  | Civil Works for Security Network - (RD-L-12/2)-Z3-L122-CCTV | 5d | 2027-11-15 | 2027-11-20 | RHD4CZ3L122ICT2400, RHD4CZ3L122TC2400, RHD4HOASTUN1APP1200 SS |
|  | 2013 | **RHD4-02-002-L122-(CCTV)-CCTV Poles** |  | 2027-11-21 | 2027-12-01 |  |
| RHD4CZ3L122CCTV1100 |  | Excavation for RC Base for CCTV Poles for Security Network - (RD-L-12/2)-Z3-L122-CCTV | 2d | 2027-11-21 | 2027-11-22 | RHD4ENSDZ3APPCCTV210, RHD4CZ3L122CCTV2100, RHD4CZ2C082RD8100 |
| RHD4CZ3L122CCTV1200 |  | Installation for RC Base for CCTV Poles for Security Network - (RD-L-12/2)-Z3-L122-CCTV | 2d | 2027-11-23 | 2027-11-24 | RHD4CZ3L122CCTV1100 |
| RHD4CZ3L122CCTV1300 |  | Backfill for RC Base for CCTV Poles for Security Network - (RD-L-12/2)-Z3-L122-CCTV | 2d | 2027-11-25 | 2027-11-27 | RHD4CZ3L122CCTV1200 |
| RHD4CZ3L122CCTV1400 |  | Installation for CCTV Poles for Security Network - (RD-L-12/2)-Z3-L122-CCTV | 2d | 2027-11-28 | 2027-11-29 | RHD4PRSHLDOSCCTV1000, RHD4PRSHLSTACCTV1000, RHD4CZ3L122CCTV1300 |
| RHD4CZ3L122CCTV1500 |  | Protection post Installation for CCTV Poles for Security Network - (RD-L-12/2)-Z3-L122-CCTV | 2d | 2027-11-30 | 2027-12-01 | RHD4CZ3L122CCTV1400 |
|  | 2014 | **RHD4-02-002-L122-(CCTV)-Camera** |  | 2027-12-02 | 2027-12-04 |  |
| RHD4CZ3L122CCTV3100 |  | Installation for Cameras for Security Network - (RD-L-12/2)-Z3-L122-CCTV | 2d | 2027-12-02 | 2027-12-04 | RHD4PRSHLDOSCCTV1100, RHD4PRSHLSTACCTV1100, RHD4CZ3L122CCTV1400, RHD4CZ3L122CCTV4100, RHD4HOASZ4APPSL170, RHD4CZ4L014RD7100 |
|  | 2015 | **RHD4-02-002-L122-(CCTV)-Power and Infrastructure** |  | 2027-11-30 | 2027-12-04 |  |
| RHD4CZ3L122CCTV4100 |  | Installation of Power outlet, UPS and midspan for PTZ Camerafor Cameras for Security Network - (RD-L-12/2)-Z3-L122-CCTV | 2d | 2027-11-30 | 2027-12-01 | RHD4PRSHLDOSCCTV1300, RHD4PRSHLSTACCTV1300, RHD4CZ3L122CCTV1400 |
| RHD4CZ3L122CCTV4200 |  | Short Range Wireless PoP wireless Bridgefor CCTV Poles for Security Network - (RD-L-12/2)-Z3-L122-CCTV | 2d | 2027-12-02 | 2027-12-04 | RHD4CZ3L122CCTV4100 |
|  | 2017 | **RHD4-02-002-L122-(CCTV)-CCTV Panels and Components** |  | 2027-12-05 | 2027-12-12 |  |
| RHD4CZ3L122CCTV6100 |  | Installation for CCTV Panels for Security Network - (RD-L-12/2)-Z3-L122-CCTV | 7d | 2027-12-05 | 2027-12-12 | RHD4PRSHLDOSCCTV1200, RHD4PRSHLSTACCTV1200, RHD4PRLOLSTACCTV1001, RHD4CZ3L122CCTV4200, RHD4CZ3L122CCTV3100 |
|  | 1461 | **RHD4-02-002-Z3-C083** |  | 2026-08-23 | 2028-01-29 |  |
|  | 567 | **RHD4-02-002-Z3-C083-Sewage Network - SW** |  | 2026-11-14 | 2026-12-26 |  |
|  | 577 | **RHD4-02-002-C083-(SW)-MH Works - 1200 mm diameter** |  | 2026-12-02 | 2026-12-26 |  |
| RHD4CZ3C083SW3100 |  | Excavation and PC Blinding works for MH 1200 mm - (RD-C-8 /3)-Z3-C083-SW | 3d | 2026-12-02 | 2026-12-05 | RHD4CZ2C082SW3100, RHD4CZ3C083SW2500 |
| RHD4CZ3C083SW3200 |  | Installation of Base for MH 1200 mm - (RD-C-8 /3)-Z3-C083-SW | 5d | 2026-12-06 | 2026-12-10 | RHD4CZ3C083SW3100 |
| RHD4CZ3C083SW3300 |  | MH Ring and C.Slab works and Backfilling works for MH 1200 mm - (RD-C-8 /3)-Z3-C083-SW | 5d | 2026-12-12 | 2026-12-16 | RHD4CZ3C083SW3200 |
| RHD4CZ3C083SW3400 |  | Steel Cover for MH 1200 mm - (RD-C-8 /3)-Z3-C083-SW | 3d | 2026-12-17 | 2026-12-20 | RHD4CZ3C083SW3300 |
| RHD4CZ3C083SW3500 |  | Finishing, Benching, Testing works for MH 1200 mm - (RD-C-8 /3)-Z3-C083-SW | 5d | 2026-12-21 | 2026-12-26 | RHD4CZ3C083SW3400, RHD4CZ3C083ST8500 |
|  | 573 | **RHD4-02-002-C083-(SW)-UPVC Pipes - 200 mm diameter** |  | 2026-11-14 | 2026-12-01 |  |
| RHD4CZ3C083SW2100 |  | Excavation works for UPVC Pipe Line 200 mm - (RD-C-8 /3)-Z3-C083-SW | 3d | 2026-11-14 | 2026-11-16 | RHD4ENSDZ3APPSW120, RHD4CZ3L122ST7300 |
| RHD4CZ3C083SW2200 |  | Bedding works for UPVC Pipe Line 200 mm - (RD-C-8 /3)-Z3-C083-SW | 3d | 2026-11-17 | 2026-11-19 | RHD4CZ3C083SW2100 |
| RHD4CZ3C083SW2300 |  | Installing for UPVC Pipe Line 200 mm - (RD-C-8 /3)-Z3-C083-SW | 4d | 2026-11-21 | 2026-11-24 | RHD4CZ3C083SW2200 |
| RHD4CZ3C083SW2400 |  | Primary Test for UPVC Pipe Line 200 mm - (RD-C-8 /3)-Z3-C083-SW | 3d | 2026-11-25 | 2026-11-28 | RHD4CZ3C083SW2300 |
| RHD4CZ3C083SW2500 |  | Backfilling and warning tape works for UPVC Pipe Line 200 mm - (RD-C-8 /3)-Z3-C083-SW | 3d | 2026-11-29 | 2026-12-01 | RHD4CZ3C083SW2400 |
|  | 1583 | **RHD4-02-002-Z3-C083-Crossings Irrigation Network - IRRC** |  |  |  |  |
|  | 1588 | **RHD4-02-002-C083-(IRRC)-HDPE Pipes - 315 mm diameter** |  |  |  |  |
|  | 1640 | **RHD4-02-002-Z3-C083-Road Works - RD** |  | 2026-09-19 | 2028-01-29 |  |
|  | 1641 | **RHD4-02-002-C083-(RD)-Subgrade** |  | 2026-09-19 | 2026-09-21 |  |
| RHD4CZ3C083RD1100 |  | Supply, lay and compaction subgrade compacted thickness 300 mm for Roads - (RD-C-8 /3)-Z3-C083-RD | 3d | 2026-09-19 | 2026-09-21 | RHD4ENSDZ3APPEW100, RHD4ENSDZ3APPRD220, RHD4CZ3C083ST1502, RHD4CZ3C083SL2400, RHD4CZ3C083ST7300 SS |
|  | 1642 | **RHD4-02-002-C083-(RD)-Aggregate Base Course** |  | 2026-09-22 | 2026-09-27 |  |
| RHD4CZ3C083RD2100 |  | Supply, lay and compaction Aggregate base course compacted thickness 300 mmfor Roads - (RD-C-8 /3)-Z3-C083-RD | 4d | 2026-09-22 | 2026-09-27 | RHD4PRSHLDOSRD1000, RHD4PRSHLSTAGRD1000, RHD4CZ3C083RD1100 |
|  | 1643 | **RHD4-02-002-C083-(RD)-Bituminous base course Two Layers, including (MC1)&(RC2)** |  | 2026-09-28 | 2027-07-01 |  |
| RHD4CZ3C083RD3100 |  | Supply, lay and Asphaltic base course including Prime Coat (MC1) for 1st Layer - (RD-C-8 /3)-Z3-C083-RD | 3d | 2026-09-28 | 2026-09-30 | RHD4PRSHLDOSRD1100, RHD4ENMSASPH2000, RHD4ENMSASPH2010, RHD4PRSHLSTAGRD1100, RHD4CZ3C083RD2100 |
| RHD4CZ3C083RD3200 |  | Supply, lay and Asphaltic base course including Tack Coat (RC2) for 2nd Layer - (RD-C-8 /3)-Z3-C083-RD | 4d | 2027-06-28 | 2027-07-01 | RHD4PRSHLDOSRD1100, RHD4PRSHLSTAGRD1100, RHD4CZ3C083RD3100, RHD4CZ3C083CCTV6100 |
|  | 1645 | **RHD4-02-002-C083-(RD)-Precast Concrete Curb** |  | 2027-07-03 | 2027-07-07 |  |
| RHD4CZ3C083RD5100 |  | Supply and installation Precast Concrete Kerb for Roads - (RD-C-8 /3)-Z3-C083-RD | 5d | 2027-07-03 | 2027-07-07 | RHD4PRSHLDOSRD1200, RHD4ENMSRD2000, RHD4ENMSRD2010, RHD4PRSHLSTAGRD1200, RHD4CZ3C083RD3200 |
|  | 1648 | **RHD4-02-002-C083-(RD)-Traffic Signage** |  | 2028-01-16 | 2028-01-22 |  |
| RHD4CZ3C083RD8100 |  | Installation of Traffic Signage for Road Network - (RD-C-8 /3)-Z3-C083-RD | 6d | 2028-01-16 | 2028-01-22 | RHD4PRSHLDOSRD1600, RHD4PRSHLSTAGST1401, RHD4PRSHLSTAGST1501, RHD4PRSHLSTAGRD1600, RHD4CZ3C083RD5100, RHD4CZ3C083TC2400, RHD4CZ3C083ICT2400, RHD4CZ3C011RD8100, RHD4CZ3C083SW3500, RHD4CZ3C011ST4600 |
|  | 1646 | **RHD4-02-002-C083-(RD)-Precast Interlocking Block Pavers** |  |  |  |  |
|  | 1644 | **RHD4-02-002-C083-(RD)-Bituminous concrete wearing course including tack coat (RC2)** |  | 2028-01-23 | 2028-01-29 |  |
| RHD4CZ3C083RD4100 |  | Supply, lay and compaction Asphaltic wearing course including tack Coat (RC2)for Road Network - (RD-C-8 /3)-Z3-C083-RD | 6d | 2028-01-23 | 2028-01-29 | RHD4CZ3C083RD5100, RHD4CZ3C011RD4100, RHD4CZ3C083RD8100 |
|  | 1649 | **RHD4-02-002-C083-(RD)-Speed Table and Wheel Stopper** |  |  |  |  |
|  | 1647 | **RHD4-02-002-C083-(RD)-Pavement Marking** |  | 2027-12-27 | 2027-12-29 |  |
| RHD4CZ3C083RD7100 |  | Pavement Markings for Road Network - (RD-C-8 /3)-Z3-C083-RD | 3d | 2027-12-27 | 2027-12-29 | RHD4PRSHLDOSRD1500, RHD4PRSHLSTAGRD1500, RHD4CZ3C011RD7100 |
|  | 1465 | **RHD4-02-002-Z3-C083-Storm Network - ST** |  | 2026-08-23 | 2026-10-18 |  |
|  | 5251 | **RHD4-02-002-C083-(ST)-GRP Pipes - 600 mm diameter** |  | 2026-08-29 | 2026-09-08 |  |
| RHD4CZ3C083ST1102 |  | Excavation works for GRP Pipe Line 600 mm - (RD-C-8 /3)-Z3-C083-ST | 2d | 2026-08-29 | 2026-08-30 | RHD4CZ3C083ST3100 |
| RHD4CZ3C083ST1202 |  | Bedding works for GRP Pipe Line 600 mm - (RD-C-8 /3)-Z3-C083-ST | 2d | 2026-08-31 | 2026-09-01 | RHD4CZ3C083ST1102 |
| RHD4CZ3C083ST1302 |  | Installing for GRP Pipe Line 600 mm - (RD-C-8 /3)-Z3-C083-ST | 2d | 2026-09-02 | 2026-09-03 | RHD4CZ3C083ST1202 |
| RHD4CZ3C083ST1402 |  | Primary Test for GRP Pipe Line 600 mm - (RD-C-8 /3)-Z3-C083-ST | 2d | 2026-09-05 | 2026-09-06 | RHD4CZ3C083ST1302 |
| RHD4CZ3C083ST1502 |  | Backfilling and warning tape works for GRP Pipe Line 600 mm - (RD-C-8 /3)-Z3-C083-ST | 2d | 2026-09-07 | 2026-09-08 | RHD4CZ3C083ST1402 |
|  | 710 | **RHD4-02-002-C083-(ST)-GRP Pipes - 500 mm diameter** |  | 2026-08-31 | 2026-09-13 |  |
| RHD4CZ3C083ST1101 |  | Excavation works for GRP Pipe Line 500 mm - (RD-C-8 /3)-Z3-C083-ST | 2d | 2026-08-31 | 2026-09-01 | RHD4CZ3C083ST1102 |
| RHD4CZ3C083ST1201 |  | Bedding works for GRP Pipe Line 500 mm - (RD-C-8 /3)-Z3-C083-ST | 2d | 2026-09-02 | 2026-09-03 | RHD4CZ3C083ST1101 |
| RHD4CZ3C083ST1301 |  | Installing for GRP Pipe Line 500 mm - (RD-C-8 /3)-Z3-C083-ST | 3d | 2026-09-05 | 2026-09-07 | RHD4CZ3C083ST1201 |
| RHD4CZ3C083ST1401 |  | Primary Test for GRP Pipe Line 500 mm - (RD-C-8 /3)-Z3-C083-ST | 2d | 2026-09-08 | 2026-09-09 | RHD4CZ3C083ST1301 |
| RHD4CZ3C083ST1501 |  | Backfilling and warning tape works for GRP Pipe Line 500 mm - (RD-C-8 /3)-Z3-C083-ST | 3d | 2026-09-10 | 2026-09-13 | RHD4CZ3C083ST1401 |
|  | 1482 | **RHD4-02-002-C083-(ST)-MH Works - 1200 mm diameter** |  | 2026-08-23 | 2026-10-18 |  |
| RHD4CZ3C083ST3100 |  | Excavation and PC Blinding works for MH 1200 mm - (RD-C-8 /3)-Z3-C083-ST | 5d | 2026-08-23 | 2026-08-27 | RHD4ENSDZ3APPST110, RHD4ENMSST2000, RHD4ENMSST2010, RHD4PRSHLDOSST1301 |
| RHD4CZ3C083ST3200 |  | Installation of Base for MH 1200 mm - (RD-C-8 /3)-Z3-C083-ST | 5d | 2026-08-29 | 2026-09-02 | RHD4PRSHLSTAGST1602, RHD4CZ3C083ST3100 |
| RHD4CZ3C083ST3300 |  | MH Ring and C.Slab works and Backfilling works for MH 1200 mm - (RD-C-8 /3)-Z3-C083-ST | 5d | 2026-09-03 | 2026-09-08 | RHD4PRSHLDOSST1602, RHD4CZ3C083ST3200 |
| RHD4CZ3C083ST3400 |  | Steel Cover for MH 1200 mm - (RD-C-8 /3)-Z3-C083-ST | 5d | 2026-10-07 | 2026-10-12 | RHD4PRSHLDOSST1702, RHD4PRSHLSTAGST1702, RHD4CZ3C083ST3300, RHD4CZ3C083ST2500, RHD4CZ3C083ST1500, RHD4CZ3C083RD3100, RHD4CZ3C083ST1501 |

| ID | WBS | Task | Duration | Start | Finish | Predecessors |
| --- | --- | --- | --- | --- | --- | --- |
| RHD4CZ3C083ST3500 |  | Finishing, Benching, Testing works for MH 1200 mm - (RD-C-8 /3)-Z3-C083-ST | 5d | 2026-10-13 | 2026-10-18 | RHD4CZ3C083ST3400 |
|  | 1466 | **RHD4-02-002-C083-(ST)-GRP Pipes - 400 mm diameter** |  | 2026-09-09 | 2026-09-20 |  |
| RHD4CZ3C083ST1100 |  | Excavation works for GRP Pipe Line 400 mm - (RD-C-8 /3)-Z3-C083-ST | 2d | 2026-09-09 | 2026-09-10 | RHD4ENSDZ3APPST110, RHD4CZ3C083ST3300 |
| RHD4CZ3C083ST1200 |  | Bedding works for GRP Pipe Line 400 mm - (RD-C-8 /3)-Z3-C083-ST | 2d | 2026-09-12 | 2026-09-13 | RHD4CZ3C083ST1100 |
| RHD4CZ3C083ST1300 |  | Installing for GRP Pipe Line 400 mm - (RD-C-8 /3)-Z3-C083-ST | 2d | 2026-09-14 | 2026-09-15 | RHD4PRSHLSTAGST1002, RHD4CZ3C083ST1200, RHD4PRSHLDOSST1602, RHD4PRSHLPOST1000, RHD4PRSHLDOSST1008 SS, RHD4PRSHLDOSST1608, RHD4PRSHLDOSST1008, RHD4PRSHLDOSST1604, RHD4PRSHLDOSST1004 |
| RHD4CZ3C083ST1400 |  | Primary Test for GRP Pipe Line 400 mm - (RD-C-8 /3)-Z3-C083-ST | 2d | 2026-09-16 | 2026-09-17 | RHD4CZ3C083ST1300 |
| RHD4CZ3C083ST1500 |  | Backfilling and warning tape works for GRP Pipe Line 400 mm - (RD-C-8 /3)-Z3-C083-ST | 2d | 2026-09-19 | 2026-09-20 | RHD4CZ3C083ST1400 |
|  | 1480 | **RHD4-02-002-C083-(ST)-UPVC Pipes - 300 mm diameter** |  | 2026-09-21 | 2026-10-06 |  |
| RHD4CZ3C083ST2100 |  | Excavation works for UPVC Pipe Line 300 mm - (RD-C-8 /3)-Z3-C083-ST | 3d | 2026-09-21 | 2026-09-24 | RHD4ENSDZ3APPST110, RHD4PRSHLSTAGSW1001, RHD4CZ3C083ST3300, RHD4CZ3C083ST1500 |
| RHD4CZ3C083ST2200 |  | Bedding works for UPVC Pipe Line 300 mm - (RD-C-8 /3)-Z3-C083-ST | 2d | 2026-09-26 | 2026-09-27 | RHD4CZ3C083ST2100 |
| RHD4CZ3C083ST2300 |  | Installing for UPVC Pipe Line 300 mm - (RD-C-8 /3)-Z3-C083-ST | 3d | 2026-09-28 | 2026-09-30 | RHD4PRSHLDOSST1102, RHD4PRSHLSTAGST1102, RHD4CZ3C083ST2200, RHD4CZ3C083ST7300 |
| RHD4CZ3C083ST2400 |  | Primary Test for UPVC Pipe Line 300 mm - (RD-C-8 /3)-Z3-C083-ST | 2d | 2026-10-01 | 2026-10-03 | RHD4CZ7L015TC3400, RHD4CZ3C083ST2300 |
| RHD4CZ3C083ST2500 |  | Backfilling and warning tape works for UPVC Pipe Line 300 mm - (RD-C-8 /3)-Z3-C083-ST | 3d | 2026-10-04 | 2026-10-06 | RHD4PRSHLSTAGSW1000, RHD4PRSHLSTAGSW1008, RHD4CZ3C083ST2400, RHD4CZ3C083ST6100 |
|  | 1488 | **RHD4-02-002-C083-(ST)-Concrete Encasement** |  | 2026-09-29 | 2026-09-30 |  |
| RHD4CZ3C083ST6100 |  | Pipe Encasement for Storm Pipelines - (RD-C-8 /3)-Z3-C083-ST | 2d | 2026-09-29 | 2026-09-30 | RHD4CZ3C083ST2300 SS, RHD4CZ3C083ST2300 FF, RHD4CZ3C083ST2200 |
|  | 1489 | **RHD4-02-002-Z3-C083-Catch Basin - ST** |  | 2026-09-09 | 2026-10-24 |  |
|  | 1490 | **RHD4-02-002-C083-(ST)-Single Catch Basin Works** |  | 2026-09-09 | 2026-10-24 |  |
| RHD4CZ3C083ST7100 |  | Excavation works for Single Catch Basin - (RD-C-8 /3)-Z3-C083-ST | 3d | 2026-09-09 | 2026-09-12 | RHD4ENSDZ3APPST110, RHD4CZ3C083ST3300 |
| RHD4CZ3C083ST7200 |  | PC Blinding, Installation and Pipe connection for Single Catch Basin - (RD-C-8 /3)-Z3-C083-ST | 3d | 2026-09-13 | 2026-09-15 | RHD4CZ3C083ST7100 |
| RHD4CZ3C083ST7300 |  | Rings & C.Slab & Final Backfill for Single Catch Basin - (RD-C-8 /3)-Z3-C083-ST | 3d | 2026-09-16 | 2026-09-19 | RHD4PRSHLDOSST1302, RHD4PRSHLSTAGST1302, RHD4CZ3C083ST7200 |
| RHD4CZ3C083ST7400 |  | Steel Cover for Single Catch Basin - (RD-C-8 /3)-Z3-C083-ST | 3d | 2026-10-13 | 2026-10-15 | RHD4PRSHLDOSST1702, RHD4CZ3C083ST7300, RHD4CZ3C083ST2500, RHD4CZ3C083ST3400 |
| RHD4CZ3C083ST7500 |  | Finishing and Insulation works for Single Catch Basin - (RD-C-8 /3)-Z3-C083-ST | 5d | 2026-10-19 | 2026-10-24 | RHD4CZ3C083ST7400, RHD4CZ3C083ST3500 |
|  | 5274 | **RHD4-02-002-C083-(ST)-Double Catch Basin Works** |  | 2026-09-20 | 2026-10-01 |  |
| RHD4CZ3C083ST8100 |  | Excavation works for Double Catch Basin - (RD-C-8 /3)-Z3-C083-ST | 2d | 2026-09-20 | 2026-09-21 | RHD4CZ3C083ST7300 |
| RHD4CZ3C083ST8200 |  | PC Blinding, Installation and Pipe connection for Double Catch Basin - (RD-C-8 /3)-Z3-C083-ST | 2d | 2026-09-22 | 2026-09-24 | RHD4CZ3C083ST8100 |
| RHD4CZ3C083ST8300 |  | Rings & C.Slab & Final Backfillfor Double Catch Basin - (RD-C-8 /3)-Z3-C083-ST | 2d | 2026-09-26 | 2026-09-27 | RHD4CZ3C083ST8200 |
| RHD4CZ3C083ST8400 |  | Steel Cover for Double Catch Basin - (RD-C-8 /3)-Z3-C083-ST | 2d | 2026-09-28 | 2026-09-29 | RHD4CZ3C083ST8300 |
| RHD4CZ3C083ST8500 |  | Finishing and Insulation works for Double Catch Basin - (RD-C-8 /3)-Z3-C083-ST | 2d | 2026-09-30 | 2026-10-01 | RHD4CZ3C083ST8400 |
|  | 1551 | **RHD4-02-002-Z3-C083-Potable Network - PT** |  | 2026-10-19 | 2026-12-27 |  |
|  | 1555 | **RHD4-02-002-C083-(PT)-HDPE Pipes - 400 mm diameter** |  | 2026-10-19 | 2026-11-21 |  |
| RHD4CZ3C083PT1103 |  | Excavation works for HDPE Pipline 400 mm - (RD-C-8 /3)-Z3-C083-PT | 6d | 2026-10-19 | 2026-10-25 | RHD4ENSDZ3APPPT130, RHD4ENMSPT2000, RHD4CZ3C083ST1500, RHD4CZ3C083ST2200, RHD4CZ3C083ST3500 |
| RHD4CZ3C083PT1203 |  | Bedding works for HDPE Pipline 400 mm - (RD-C-8 /3)-Z3-C083-PT | 5d | 2026-10-26 | 2026-10-31 | RHD4CZ3C083PT1103 |
| RHD4CZ3C083PT1303 |  | Installing for HDPE Pipline 400 mm - (RD-C-8 /3)-Z3-C083-PT | 8d | 2026-11-01 | 2026-11-09 | RHD4PRSHLDOSPT1000, RHD4PRSHLSTAGPT1000, RHD4CZ3C083PT1203 |
| RHD4CZ3C083PT1403 |  | Primary Test for HDPE Pipline 400 mm - (RD-C-8 /3)-Z3-C083-PT | 4d | 2026-11-10 | 2026-11-14 | RHD4CZ3C083PT1303 |
| RHD4CZ3C083PT1503 |  | Backfilling and warning tape works for HDPE Pipline 400 mm - (RD-C-8 /3)-Z3-C083-PT | 6d | 2026-11-15 | 2026-11-21 | RHD4CZ3C083PT1403 |
|  | 1563 | **RHD4-02-002-C083-(PT)-Air Valves** |  | 2026-11-22 | 2026-11-25 |  |
| RHD4CZ3C083PT3103 |  | Installation for Air Valves for Potable Water Network - (RD-C-8 /3)-Z3-C083-PT | 2d | 2026-11-22 | 2026-11-23 | RHD4PRSHLDOSPT1200, RHD4PRSHLSTAGPT1200, RHD4CZ3C083PT2302, RHD4CZ3C083PT1503 |
| RHD4CZ3C083PT3203 |  | Stem and Service box for Air Valves for Potable Water Network - (RD-C-8 /3)-Z3-C083-PT | 2d | 2026-11-24 | 2026-11-25 | RHD4PRSHLDOSPT1300, RHD4PRSHLSTAGPT1300, RHD4CZ3C083PT3103, RHD4CZ3C083PT2402 |
|  | 1564 | **RHD4-02-002-C083-(PT)-Fire Hydrant** |  | 2026-11-26 | 2026-12-13 |  |
| RHD4CZ3C083PT4100 |  | Excavation and Bedding and Pipe Installation for Fire Hydrant - (RD-C-8 /3)-Z3-C083-PT | 4d | 2026-11-26 | 2026-11-30 | RHD4ENSDZ3APPPT130, RHD4CZ3C083PT1103 SS, RHD4CZ3C083PT3203 |
| RHD4CZ3C083PT4200 |  | Valve Installation for Fire Hydrant - (RD-C-8 /3)-Z3-C083-PT | 3d | 2026-12-01 | 2026-12-03 | RHD4CZ3C083PT4100 |
| RHD4CZ3C083PT4300 |  | Stem for Fire Hydrant - (RD-C-8 /3)-Z3-C083-PT | 3d | 2026-12-05 | 2026-12-07 | RHD4CZ3C083PT4200 |
| RHD4CZ3C083PT4400 |  | Fire Installation for Fire Hydrant - (RD-C-8 /3)-Z3-C083-PT | 3d | 2026-12-08 | 2026-12-10 | RHD4PRSHLDOSPT1500, RHD4PRSHLSTAGPT1500, RHD4CZ3C083PT4300 |
| RHD4CZ3C083PT4500 |  | Protection Barriers for Fire Hydrant - (RD-C-8 /3)-Z3-C083-PT | 2d | 2026-12-12 | 2026-12-13 | RHD4CZ3C083PT4400 |
|  | 1565 | **RHD4-02-002-C083-(PT)-Concrete Encasement** |  |  |  |  |
|  | 1749 | **RHD4-02-002-C083-(PT)-Wash out Valve Chambers** |  | 2026-12-14 | 2026-12-22 |  |
| RHD4CZ3C083PT2101 |  | Excavation and Bedding for Wash out Valve Chambers for Potable Water Network - (RD-C-8 /3)-Z3-C083-PT | 2d | 2026-12-14 | 2026-12-15 | RHD4CZ3C083ST3500, RHD4CZ3C083PT4500 |
| RHD4CZ3C083PT2201 |  | PC works for Wash out Valve Chambers for Potable Water Network - (RD-C-8 /3)-Z3-C083-PT | 2d | 2026-12-16 | 2026-12-17 | RHD4CZ3C083PT2101 |
| RHD4CZ3C083PT2301 |  | Installation for Wash out Valve Chambers for Potable Water Network - (RD-C-8 /3)-Z3-C083-PT | 2d | 2026-12-19 | 2026-12-20 | RHD4CZ3C083PT2201 |
| RHD4CZ3C083PT2401 |  | Backfilling works for Wash out Valve Chambers for Potable Water Network - (RD-C-8 /3)-Z3-C083-PT | 2d | 2026-12-21 | 2026-12-22 | RHD4CZ3C083PT2301 |
|  | 1750 | **RHD4-02-002-C083-(PT)-Wash out Valves** |  | 2026-12-23 | 2026-12-27 |  |
| RHD4CZ3C083PT3102 |  | Installation for Wash out Valves for Potable Water Network - (RD-C-8 /3)-Z3-C083-PT | 2d | 2026-12-23 | 2026-12-24 | RHD4CZ3C083PT2301, RHD4CZ3C083PT2401 |
| RHD4CZ3C083PT3202 |  | Stem and Service box for Wash out Valves for Potable Water Network - (RD-C-8 /3)-Z3-C083-PT | 2d | 2026-12-26 | 2026-12-27 | RHD4CZ3C083PT3102, RHD4CZ3C083PT2401 |
|  | 1562 | **RHD4-02-002-C083-(PT)-Air Valve Chambers** |  | 2026-10-26 | 2026-11-03 |  |
| RHD4CZ3C083PT2102 |  | Excavation and Bedding for Air Valve Chambers for Potable Water Network - (RD-C-8 /3)-Z3-C083-PT | 2d | 2026-10-26 | 2026-10-27 | RHD4ENSDZ3APPPT130, RHD4CZ3C083PT1103 |
| RHD4CZ3C083PT2202 |  | PC works for Air Valve Chambers for Potable Water Network - (RD-C-8 /3)-Z3-C083-PT | 2d | 2026-10-28 | 2026-10-29 | RHD4CZ3C083PT2102 |
| RHD4CZ3C083PT2302 |  | Installation for Air Valve Chambers for Potable Water Network - (RD-C-8 /3)-Z3-C083-PT | 2d | 2026-10-31 | 2026-11-01 | RHD4PRSHLDOSPT1100, RHD4PRSHLDOSPT1400, RHD4PRSHLSTAGPT1100, RHD4PRSHLSTAGPT1400, RHD4CZ3C083PT2202 |
| RHD4CZ3C083PT2402 |  | Backfilling works for Air Valve Chambers for Potable Water Network - (RD-C-8 /3)-Z3-C083-PT | 2d | 2026-11-02 | 2026-11-03 | RHD4CZ3C083PT2302 |
|  | 1536 | **RHD4-02-002-Z3-C083-Crossings Potable Network - PTCr** |  |  |  |  |
|  | 1549 | **RHD4-02-002-C083-(PTCr)-Fire Hydrant** |  |  |  |  |
|  | 1566 | **RHD4-02-002-Z3-C083-Irrigation Network - IRR** |  | 2026-12-28 | 2027-01-23 |  |
|  | 1573 | **RHD4-02-002-C083-(IRR)-HDPE Pipes - 450 mm diameter** |  |  |  |  |
|  | 1572 | **RHD4-02-002-C083-(IRR)-HDPE Pipes - 400 mm diameter** |  |  |  |  |
|  | 1571 | **RHD4-02-002-C083-(IRR)-HDPE Pipes - 315 mm diameter** |  | 2026-12-28 | 2027-01-23 |  |
| RHD4CZ3C083IRR1104 |  | Excavation works for HDPE Pipline 315 mm - (RD-C-8 /3)-Z3-C083-IRR | 5d | 2026-12-28 | 2027-01-02 | RHD4ENSDZ3APPIRR140, RHD4ENMSRR2000, RHD4CZ3C083ST2500, RHD4CZ3C083PT3202 |
| RHD4CZ3C083IRR1204 |  | Bedding works for HDPE Pipline 315 mm - (RD-C-8 /3)-Z3-C083-IRR | 7d | 2027-01-03 | 2027-01-10 | RHD4CZ3C083IRR1104 |
| RHD4CZ3C083IRR1304 |  | Installing for HDPE Pipline 315 mm - (RD-C-8 /3)-Z3-C083-IRR | 3d | 2027-01-11 | 2027-01-13 | RHD4PRSHLDOSIRR1000, RHD4PRSHLSTAGIRR1000, RHD4CZ3C083IRR1204 |
| RHD4CZ3C083IRR1404 |  | Primary Test for HDPE Pipline 315 mm - (RD-C-8 /3)-Z3-C083-IRR | 3d | 2027-01-14 | 2027-01-17 | RHD4CZ3C083IRR1304 |
| RHD4CZ3C083IRR1504 |  | Backfilling and warning tape works for HDPE Pipline 315 mm - (RD-C-8 /3)-Z3-C083-IRR | 5d | 2027-01-18 | 2027-01-23 | RHD4CZ3C083IRR1404 |
|  | 1600 | **RHD4-02-002-Z3-C083-Medium Voltage Network - MV** |  |  |  |  |

| ID | WBS | Task | Duration | Start | Finish | Predecessors |
| --- | --- | --- | --- | --- | --- | --- |
|  | 1601 | **RHD4-02-002-C083-(MV)-Medium Voltage cable trench** |  |  |  |  |
|  | 1603 | **RHD4-02-002-C083-(MV)-Medium Voltage cables 3Cx 500 mm²** |  |  |  |  |
|  | 1604 | **RHD4-02-002-C083-(MV)-Medium Voltage cables 3Cx 50 mm²** |  |  |  |  |
|  | 1606 | **RHD4-02-002-C083-(MV)-Unit Substations** |  |  |  |  |
|  | 1607 | **RHD4-02-002-Z3-C083-Low Voltage Network - LV** |  | 2027-01-24 | 2027-02-10 |  |
|  | 1610 | **RHD4-02-002-C083-(LV)-Low Voltage cables** |  | 2027-01-24 | 2027-02-10 |  |
| RHD4CZ3C083LV3100 |  | Excavation for Low Voltage Cables for Low Voltage Network - (RD-C-8 /3)-Z3-C083-LV | 5d | 2027-01-24 | 2027-01-28 | RHD4ENSDZ3APPLV160, RHD4CZ3C083PT1503, RHD4CZ3C083RD3100, RHD4CZ3C083IRR1504 |
| RHD4CZ3C083LV3200 |  | Cable Laying of Low Voltage Cables for Low Voltage Network - (RD-C-8 /3)-Z3-C083-LV | 4d | 2027-01-30 | 2027-02-02 | RHD4PRSHLDOSLV1100, RHD4ENMSLV2000, RHD4ENMSLV2010, RHD4PRSHLSTAGLV1100, RHD4CZ3C083LV3100 |
| RHD4CZ3C083LV3300 |  | Warning tape and Backfill for Low Voltage Cables for Low Voltage Network - (RD-C-8 /3)-Z3-C083-LV | 4d | 2027-02-03 | 2027-02-07 | RHD4CZ3C083LV3200 |
| RHD4CZ3C083LV3400 |  | Testing of Low Voltage Cables for Low Voltage Network - (RD-C-8 /3)-Z3-C083-LV | 3d | 2027-02-08 | 2027-02-10 | RHD4CZ3C083LV3300 |
|  | 1611 | **RHD4-02-002-C083-(LV)-Low Voltage Distribution Pillars** |  |  |  |  |
|  | 1612 | **RHD4-02-002-C083-(LV)-Low Voltage Distribution Pillars Earthing** |  |  |  |  |
|  | 1613 | **RHD4-02-002-Z3-C083-Street Lighting Network - SL** |  | 2026-09-09 | 2027-04-03 |  |
|  | 1614 | **RHD4-02-002-C083-(SL)-Street Lighting duct banks** |  | 2026-09-09 | 2026-09-17 |  |
| RHD4CZ3C083SL2100 |  | Excavation of Duct Banks for Street Lighting Network - (RD-C-8 /3)-Z3-C083-SL | 2d | 2026-09-09 | 2026-09-10 | RHD4ENSDZ3APPSL170, RHD4CZ3C083ST1502 |
| RHD4CZ3C083SL2200 |  | Installation of Duct Banks for Street Lighting Network - (RD-C-8 /3)-Z3-C083-SL | 2d | 2026-09-12 | 2026-09-13 | RHD4PRSHLDOSSL1000, RHD4PRSHLSTAGSL1000, RHD4CZ3C083SL2100 |
| RHD4CZ3C083SL2300 |  | Pouring of Duct Banks for Street Lighting Network - (RD-C-8 /3)-Z3-C083-SL | 2d | 2026-09-14 | 2026-09-15 | RHD4CZ3C083SL2200 |
| RHD4CZ3C083SL2400 |  | Backfilling of Duct Banks for Street Lighting Network - (RD-C-8 /3)-Z3-C083-SL | 2d | 2026-09-16 | 2026-09-17 | RHD4CZ3C083SL2300 |
|  | 1615 | **RHD4-02-002-C083-(SL)-Street Lighting Drawpit** |  | 2027-02-11 | 2027-02-15 |  |
| RHD4CZ3C083SL5100 |  | Excavation of Drawpit size 600x600x900mm for Street Lighting Network - (RD-C-8 /3)-Z3-C083-SL | 2d | 2027-02-11 | 2027-02-13 | RHD4ENSDZ3APPSL170, RHD4CZ3C083SL2300, RHD4CZ3C083LV3400 |
| RHD4CZ3C083SL5200 |  | Installation of Drawpit size 600x600x900mm for Street Lighting Network - (RD-C-8 /3)-Z3-C083-SL | 2d | 2027-02-14 | 2027-02-15 | RHD4PRSHLDOSSL1400, RHD4PRSHLSTAGSL1400, RHD4CZ3C083SL5100 |
|  | 1616 | **RHD4-02-002-C083-(SL)-Street Lighting cables** |  | 2027-02-13 | 2027-03-18 |  |
| RHD4CZ3C083SL3100 |  | Excavation for Street Lighting Cables for Street Lighting Network - (RD-C-8 /3)-Z3-C083-SL | 8d | 2027-02-13 | 2027-02-21 | RHD4ENSDZ3APPSL170, RHD4CZ3C083SL1300 |
| RHD4CZ3C083SL3200 |  | Cable Laying of Street Lighting Cables for Street Lighting Network - (RD-C-8 /3)-Z3-C083-SL | 7d | 2027-02-23 | 2027-03-02 | RHD4PRSHLDOSSL1100, RHD4ENMSSL2000, RHD4ENMSSL2010, RHD4PRSHLSTAGSL1100, RHD4CZ3C083SL3100 |
| RHD4CZ3C083SL3300 |  | Warning tape and Backfill for Street Lighting Cables for Street Lighting Network - (RD-C-8 /3)-Z3-C083-SL | 7d | 2027-03-03 | 2027-03-14 | RHD4CZ3C083SL3200 |
| RHD4CZ3C083SL3400 |  | Testing of Street Lighting Cables for Street Lighting Network - (RD-C-8 /3)-Z3-C083-SL | 4d | 2027-03-15 | 2027-03-18 | RHD4CZ3C083SL3300, RHD4CZ3C083SL5200 |
|  | 1617 | **RHD4-02-002-C083-(SL)-Street Lighting Poles** |  | 2027-01-30 | 2027-04-03 |  |
| RHD4CZ3C083SL1100 |  | Excavation for RC Base for Lighting Poles for Street Lighting Network - (RD-C-8 /3)-Z3-C083-SL | 4d | 2027-01-30 | 2027-02-02 | RHD4ENSDZ3APPSL170, RHD4CZ3C083SL2400, RHD4CZ3C083PT1503, RHD4CZ3C083IRR1504, RHD4CZ3C083LV3100 |
| RHD4CZ3C083SL1200 |  | Installation for RC Base for Lighting Poles for Street Lighting Network - (RD-C-8 /3)-Z3-C083-SL | 4d | 2027-02-03 | 2027-02-07 | RHD4CZ3C083SL1100 |
| RHD4CZ3C083SL1300 |  | Backfill for RC Base for Lighting Poles for Street Lighting Network - (RD-C-8 /3)-Z3-C083-SL | 4d | 2027-02-08 | 2027-02-11 | RHD4CZ3C083SL1200, RHD4CZ3C083LV3100 |
| RHD4CZ3C083SL1400 |  | Installation for Lighting Poles for Street Lighting Network - (RD-C-8 /3)-Z3-C083-SL | 6d | 2027-03-20 | 2027-03-25 | RHD4PRSHLDOSSL1200, RHD4ENMSSL2000, RHD4ENMSSL2010, RHD4PRSHLSTAGSL1200, RHD4CZ3C083SL1300, RHD4CZ3C083SL3400 |
| RHD4CZ3C083SL1500 |  | Luminaire Installation for Lighting Poles for Street Lighting Network - (RD-C-8 /3)-Z3-C083-SL | 7d | 2027-03-27 | 2027-04-03 | RHD4PRSHLDOSSL1300, RHD4PRSHLSTAGSL1300, RHD4CZ3C083SL1400 |
|  | 1618 | **RHD4-02-002-C083-(SL)-Street Lighting Feeder Pillars** |  | 2027-03-15 | 2027-03-28 |  |
| RHD4CZ3C083SL4100 |  | Leveling for Distribution Pillars for Street Lighting Network - (RD-C-8 /3)-Z3-C083-SL | 2d | 2027-03-15 | 2027-03-16 | RHD4CZ3C083SL3300 |
| RHD4CZ3C083SL4200 |  | Lean Concrete for Distribution Pillars for Street Lighting Network - (RD-C-8 /3)-Z3-C083-SL | 2d | 2027-03-17 | 2027-03-18 | RHD4CZ3C083SL4100 |
| RHD4CZ3C083SL4300 |  | Installation of Distribution Pillars for Street Lighting Network - (RD-C-8 /3)-Z3-C083-SL | 2d | 2027-03-27 | 2027-03-28 | RHD4CZ3C083SL4200, RHD4CZ3C083SL1400 |
|  | 1619 | **RHD4-02-002-C083-(SL)-Street Lighting Earthing System** |  | 2027-03-29 | 2027-03-30 |  |
| RHD4CZ3C083SL6100 |  | Installation of Earthing for Lighting Poles and Fedder Pillers for Street Lighting Network - (RD-C-8 /3)-Z3-C083-SL | 2d | 2027-03-29 | 2027-03-30 | RHD4ENMSER2000, RHD4ENMSER2010, RHD4CZ3C083SL4300 |
|  | 1625 | **RHD4-02-002-Z3-C083-Telecommunications Network - TC** |  | 2027-03-31 | 2027-05-05 |  |
|  | 1626 | **RHD4-02-002-C083-(TC)-Telecommunications Ducts** |  | 2027-03-31 | 2027-05-05 |  |
| RHD4CZ3C083TC2100 |  | Excavation of HDPE Ducts for Telecom Network - (RD-C-8 /3)-Z3-C083-TC | 9d | 2027-03-31 | 2027-04-10 | RHD4ENSDZ3APPTC190, RHD4CZ3C083IRR1504, RHD4CZ3C083SL6100 |
| RHD4CZ3C083TC2200 |  | Installation of HDPE Ducts for Telecom Network - (RD-C-8 /3)-Z3-C083-TC | 13d | 2027-04-11 | 2027-04-25 | RHD4PRSHLDOSTC1000, RHD4PRSHLSTAGTC1000, RHD4CZ3C083TC2100 |
| RHD4CZ3C083TC2400 |  | Backfilling of HDPE Ducts for Telecom Network - (RD-C-8 /3)-Z3-C083-TC | 9d | 2027-04-26 | 2027-05-05 | RHD4CZ3C083TC2200, RHD4CZ3C083TC5200, RHD4CZ3L122SL2400 |
|  | 1627 | **RHD4-02-002-C083-(TC)-Telecommunications Manholes** |  | 2027-04-11 | 2027-04-17 |  |
| RHD4CZ3C083TC5100 |  | Excavation for Manholes for Telecom Network - (RD-C-8 /3)-Z3-C083-TC | 3d | 2027-04-11 | 2027-04-13 | RHD4ENSDZ3APPTC190, RHD4CZ3C083TC2100, RHD4CZ3C083SL1500 |
| RHD4CZ3C083TC5200 |  | Installation of Manholes for Telecom Network - (RD-C-8 /3)-Z3-C083-TC | 3d | 2027-04-14 | 2027-04-17 | RHD4PRSHLDOSTC1200, RHD4PRSHLSTAGTC1200, RHD4CZ3C083TC5100, RHD4CZ3C083TC2200 SS |
|  | 1629 | **RHD4-02-002-Z3-C083-Information and Communication Technologies - ICT** |  | 2027-03-31 | 2027-05-09 |  |
|  | 1630 | **RHD4-02-002-C083-(ICT)-Information and Communication Technologies Ducts** |  | 2027-03-31 | 2027-05-09 |  |
| RHD4CZ3C083ICT2100 |  | Excavation of HDPE Ducts for ICT Network - (RD-C-8 /3)-Z3-C083-ICT | 10d | 2027-03-31 | 2027-04-11 | RHD4ENSDZ3APPICT200, RHD4CZ3C083RW3001, RHD4CZ3C083SL6100 |
| RHD4CZ3C083ICT2200 |  | Installation of HDPE Ducts for ICT Network - (RD-C-8 /3)-Z3-C083-ICT | 14d | 2027-04-12 | 2027-04-27 | RHD4PRSHLDOSICT1000, RHD4PRSHLSTAGICT1000, RHD4CZ3C083ICT2100 |
| RHD4CZ3C083ICT2400 |  | Backfilling of HDPE Ducts for ICT Network - (RD-C-8 /3)-Z3-C083-ICT | 10d | 2027-04-28 | 2027-05-09 | RHD4CZ3C083ICT2200, RHD4CZ3C083ICT5200 |
|  | 1631 | **RHD4-02-002-C083-(ICT)-Information and Communication Technologies Manholes** |  | 2027-04-12 | 2027-04-18 |  |
| RHD4CZ3C083ICT5100 |  | Excavation for Manholes for ICT Network - (RD-C-8 /3)-Z3-C083-ICT | 3d | 2027-04-12 | 2027-04-14 | RHD4ENSDZ3APPICT200, RHD4CZ3C083ICT2100 |
| RHD4CZ3C083ICT5200 |  | Installation of Manholes for ICT Network - (RD-C-8 /3)-Z3-C083-ICT | 3d | 2027-04-15 | 2027-04-18 | RHD4PRSHLDOSICT1200, RHD4PRSHLSTAGICT1200, RHD4CZ3C083ICT5100 |
|  | 1620 | **RHD4-02-002-Z3-C083-Landscape Network - LS** |  |  |  |  |
|  | 1621 | **RHD4-02-002-C083-(LS)-Landscape Lighting cables** |  |  |  |  |
|  | 1622 | **RHD4-02-002-C083-(LS)-Landscape Feeder Pillars** |  |  |  |  |
|  | 1623 | **RHD4-02-002-C083-(LS)-Landscape Bollard Poles** |  |  |  |  |
|  | 1624 | **RHD4-02-002-C083-(LS)-Landscape Feeder Pillars Earthing** |  |  |  |  |
|  | 1633 | **RHD4-02-002-Z3-C083-Security Network - CCTV** |  | 2027-05-10 | 2027-06-27 |  |
|  | 1634 | **RHD4-02-002-C083-(CCTV)-Civil Works** |  | 2027-05-10 | 2027-05-25 |  |
| RHD4CZ3C083CCTV2100 |  | Civil Works for Security Network - (RD-C-8 /3)-Z3-C083-CCTV | 10d | 2027-05-10 | 2027-05-25 | RHD4CZ3C083ICT2400, RHD4CZ3C083TC2400 |
|  | 1635 | **RHD4-02-002-C083-(CCTV)-CCTV Poles** |  | 2027-05-26 | 2027-06-06 |  |
| RHD4CZ3C083CCTV1100 |  | Excavation for RC Base for CCTV Poles for Security Network - (RD-C-8 /3)-Z3-C083-CCTV | 2d | 2027-05-26 | 2027-05-27 | RHD4ENSDZ3APPCCTV210, RHD4CZ3C083CCTV2100 |
| RHD4CZ3C083CCTV1200 |  | Installation for RC Base for CCTV Poles for Security Network - (RD-C-8 /3)-Z3-C083-CCTV | 2d | 2027-05-29 | 2027-05-30 | RHD4CZ3C083CCTV1100 |
| RHD4CZ3C083CCTV1300 |  | Backfill for RC Base for CCTV Poles for Security Network - (RD-C-8 /3)-Z3-C083-CCTV | 2d | 2027-05-31 | 2027-06-01 | RHD4CZ3C083CCTV1200 |
| RHD4CZ3C083CCTV1400 |  | Installation for CCTV Poles for Security Network - (RD-C-8 /3)-Z3-C083-CCTV | 2d | 2027-06-02 | 2027-06-03 | RHD4PRSHLDOSCCTV1000, RHD4PRSHLSTACCTV1000, RHD4CZ3C083CCTV1300 |
| RHD4CZ3C083CCTV1500 |  | Protection post Installation for CCTV Poles for Security Network - (RD-C-8 /3)-Z3-C083-CCTV | 2d | 2027-06-05 | 2027-06-06 | RHD4CZ3C083CCTV1400 |
|  | 1636 | **RHD4-02-002-C083-(CCTV)-Camera** |  | 2027-06-07 | 2027-06-08 |  |
| RHD4CZ3C083CCTV3100 |  | Installation for Cameras for Security Network - (RD-C-8 /3)-Z3-C083-CCTV | 2d | 2027-06-07 | 2027-06-08 | RHD4PRSHLDOSCCTV1100, RHD4PRSHLSTACCTV1100, RHD4CZ3C083CCTV1400, RHD4CZ3C083CCTV4100 |

| ID | WBS | Task | Duration | Start | Finish | Predecessors |
| --- | --- | --- | --- | --- | --- | --- |
|  | 1637 | **RHD4-02-002-C083-(CCTV)-Power and Infrastructure** |  | 2027-06-05 | 2027-06-08 |  |
| RHD4CZ3C083CCTV4100 |  | Installation of Power outlet, UPS and midspan for PTZ Camerafor Cameras for Security Network - (RD-C-8 /3)-Z3-C083-CCTV | 2d | 2027-06-05 | 2027-06-06 | RHD4PRSHLDOSCCTV1300, RHD4PRSHLSTACCTV1300, RHD4CZ3C083CCTV1400 |
| RHD4CZ3C083CCTV4200 |  | Short Range Wireless PoP wireless Bridgefor CCTV Poles for Security Network - (RD-C-8 /3)-Z3-C083-CCTV | 2d | 2027-06-07 | 2027-06-08 | RHD4CZ3C083CCTV4100 |
|  | 1639 | **RHD4-02-002-C083-(CCTV)-CCTV Panels and Components** |  | 2027-06-09 | 2027-06-27 |  |
| RHD4CZ3C083CCTV6100 |  | Installation for CCTV Panels for Security Network - (RD-C-8 /3)-Z3-C083-CCTV | 16d | 2027-06-09 | 2027-06-27 | RHD4PRSHLDOSCCTV1200, RHD4PRSHLSTACCTV1200, RHD4PRLOLSTACCTV1001, RHD4CZ3C083CCTV4200, RHD4CZ3C083CCTV3100, RHD4CZ3C083CCTV1500 |
|  | 2028 | **RHD4-02-002-Z3-RA06** |  |  |  |  |
|  | 2207 | **RHD4-02-002-Z3-RA06-Road Works - RD** |  |  |  |  |
|  | 2208 | **RHD4-02-002-RA06-(RD)-Subgrade** |  |  |  |  |
|  | 2209 | **RHD4-02-002-RA06-(RD)-Aggregate Base Course** |  |  |  |  |
|  | 2210 | **RHD4-02-002-RA06-(RD)-Bituminous base course Two Layers, including (MC1)&(RC2)** |  |  |  |  |
|  | 2212 | **RHD4-02-002-RA06-(RD)-Precast Concrete Curb** |  |  |  |  |
|  | 2215 | **RHD4-02-002-RA06-(RD)-Traffic Signage** |  |  |  |  |
|  | 2213 | **RHD4-02-002-RA06-(RD)-Precast Interlocking Block Pavers** |  |  |  |  |
|  | 2211 | **RHD4-02-002-RA06-(RD)-Bituminous concrete wearing course including tack coat (RC2)** |  |  |  |  |
|  | 2214 | **RHD4-02-002-RA06-(RD)-Pavement Marking** |  |  |  |  |
|  | 2032 | **RHD4-02-002-Z3-RA06-Storm Network - ST** |  |  |  |  |
|  | 2051 | **RHD4-02-002-RA06-(ST)-MH Works - 2000 mm diameter** |  |  |  |  |
|  | 2049 | **RHD4-02-002-RA06-(ST)-MH Works - 1200 mm diameter** |  |  |  |  |
|  | 2050 | **RHD4-02-002-RA06-(ST)-MH Works - 1500 mm diameter** |  |  |  |  |
|  | 2039 | **RHD4-02-002-RA06-(ST)-GRP Pipes - 1000 mm diameter** |  |  |  |  |
|  | 2038 | **RHD4-02-002-RA06-(ST)-GRP Pipes - 900 mm diameter** |  |  |  |  |
|  | 2033 | **RHD4-02-002-RA06-(ST)-GRP Pipes - 400 mm diameter** |  |  |  |  |
|  | 2048 | **RHD4-02-002-RA06-(ST)-UPVC Pipes - 400 mm diameter** |  |  |  |  |
|  | 2047 | **RHD4-02-002-RA06-(ST)-UPVC Pipes - 300 mm diameter** |  |  |  |  |
|  | 2055 | **RHD4-02-002-RA06-(ST)-Concrete Encasement** |  |  |  |  |
|  | 2056 | **RHD4-02-002-Z3-RA06-Catch Basin - ST** |  |  |  |  |
|  | 2057 | **RHD4-02-002-RA06-(ST)-Single Catch Basin Works** |  |  |  |  |
|  | 2058 | **RHD4-02-002-RA06-(ST)-Double Catch Basin Works** |  |  |  |  |
|  | 2180 | **RHD4-02-002-Z3-RA06-Street Lighting Network - SL** |  |  |  |  |
|  | 2183 | **RHD4-02-002-RA06-(SL)-Street Lighting cables** |  |  |  |  |
|  | 2184 | **RHD4-02-002-RA06-(SL)-Street Lighting Poles** |  |  |  |  |
|  | 2186 | **RHD4-02-002-RA06-(SL)-Street Lighting Earthing System** |  |  |  |  |
|  | 2187 | **RHD4-02-002-Z3-RA06-Landscape Network - LS** |  |  |  |  |
|  | 2188 | **RHD4-02-002-RA06-(LS)-Landscape Lighting cables** |  |  |  |  |
|  | 2189 | **RHD4-02-002-RA06-(LS)-Landscape Feeder Pillars** |  |  |  |  |
|  | 2190 | **RHD4-02-002-RA06-(LS)-Landscape Bollard Poles** |  |  |  |  |
|  | 2191 | **RHD4-02-002-RA06-(LS)-Landscape Feeder Pillars Earthing** |  |  |  |  |
|  | 2200 | **RHD4-02-002-Z3-RA06-Security Network - CCTV** |  |  |  |  |
|  | 2201 | **RHD4-02-002-RA06-(CCTV)-Civil Works** |  |  |  |  |
|  | 3 | **Tunnels** |  | 2026-04-19 | 2027-05-29 |  |
|  | 4 | **Tunnel 01** |  | 2026-04-19 | 2027-05-29 |  |
|  | 17 | **RHD4-02-002 - Tunnel 1 - Stage 02** |  | 2026-04-19 | 2027-05-29 |  |
|  | 18 | **RHD4-02-002 - Tunnel 1 - STG 2 - Concrete Works** |  | 2026-04-19 | 2026-10-13 |  |
|  | 19 | **RHD4-02-002 - Tunnel 1 - Concrete Works - PC Foundation** |  | 2026-04-19 | 2026-04-27 |  |
| RHD4CTUN1Z5STG21000 |  | PC Footing Shuttering Works -TUN1-Z5-STG2-Concrete Works-PC Foundation | 2d | 2026-04-19 | 2026-04-20 | RHD4ENMSTUN2000, RHD4ENMSTUN2010, RHD4CZ5A014RW3000, RHD4PRSHLDOSST1304, RHD4PRSHLDOSST1306 |
| RHD4CTUN1Z5STG21010 |  | Casting of 100mm Blinding Concrete Under Foundation-TUN1-Z5-STG2-Concrete Works-PC Foundation | 2d | 2026-04-21 | 2026-04-22 | RHD4CTUN1Z5STG21000 |
| RHD4CTUN1Z5STG21020 |  | Applying 2 layers of waterproofing bitumenous membrane 4mm below footings-TUN1-Z5-STG2-Concrete Works-PC Foundation | 2d | 2026-04-23 | 2026-04-25 | RHD4CTUN1Z5STG21010 |
| RHD4CTUN1Z5STG21030 |  | Casting of 50mm Screed for Membrane Protection-TUN1-Z5-STG2-Concrete Works-PC Foundation | 2d | 2026-04-26 | 2026-04-27 | RHD4CTUN1Z5STG21020 |
|  | 20 | **RHD4-02-002 - Tunnel 1 - Concrete Works - RC Foundation** |  | 2026-04-28 | 2026-06-03 |  |
| RHD4CTUN1Z5STG21040 |  | Shuttering Works for RC Footing-TUN1-Z5-STG2-Concrete Works-RC Foundation(Completed) | 27d | 2026-04-28 | 2026-06-01 | RHD4CTUN1Z5STG21030, RHD4ENMSTUN2010 |
| RHD4CTUN1Z5STG21050 |  | Steel fixing Works for RC Footing -TUN1-Z5-STG2-Concrete Works-RC Foundation(Completed) | 29d | 2026-04-28 | 2026-06-03 | RHD4CTUN1Z5STG21040 SS |
| RHD4CTUN1Z5STG21060 |  | casting of reinforced concrete for RC Footing -TUN1-Z5-STG2-Concrete Works-RC Foundation(Completed) | 23d | 2026-04-28 | 2026-05-24 | RHD4ENMARAPPTU100, RHD4CTUN1Z5STG21050 SS |
| RHD4CTUN1Z5STG21070 |  | De-shuttering and Curing Works for RC Footing -TUN1-Z5-STG2-Concrete Works-RC Foundation(Completed) | 25d | 2026-04-28 | 2026-05-22 | RHD4CTUN1Z5STG21060 SS |
|  | 21 | **RHD4-02-002 - Tunnel 1 - Concrete Works - Under Ground Walls** |  | 2026-06-04 | 2026-07-28 |  |
|  | 22 | **RHD4-02-002 - Tunnel 1 - Under Ground Walls - Stage 1 (Up to 3m)** |  | 2026-06-04 | 2026-06-29 |  |
| RHD4CTUN1Z5STG21080 |  | shuttering Works of Three Sides for Walls <Stage 01>-TUN1-Z5-STG2-Concrete Works-Under Ground Walls | 5d | 2026-06-04 | 2026-06-09 | RHD4CTUN1Z5STG21070, RHD4ENMARAPPTU100, RHD4CTUN1Z5STG21060, RHD4CTUN1Z5STG21050, RHD4CTUN1Z5STG21030, RHD4ENMSTUN2010, RHD4CTUN1Z5STG21040 |
| RHD4CTUN1Z5STG21090 |  | Steel fixing Works for Walls <Stage 01>-TUN1-Z5-STG2-Concrete Works-Under Ground Walls | 5d | 2026-06-10 | 2026-06-15 | RHD4CTUN1Z5STG21080 |
| RHD4CTUN1Z5STG21100 |  | shuttering Works of the 4th Side for Walls <Stage 01>-TUN1-Z5-STG2-Concrete Works-Under Ground Walls | 4d | 2026-06-16 | 2026-06-20 | RHD4CTUN1Z5STG21090 |
| RHD4CTUN1Z5STG21110 |  | casting of reinforced concrete for Walls <Stage 01>-TUN1-Z5-STG2-Concrete Works-Under Ground Walls | 4d | 2026-06-21 | 2026-06-24 | RHD4CTUN1Z5STG21100, RHD4ENMARAPPTU100 |
| RHD4CTUN1Z5STG21120 |  | De-shuttering and Curing Works for Walls <Stage 01>-TUN1-Z5-STG2-Concrete Works-Under Ground Walls | 5d | 2026-06-25 | 2026-06-29 | RHD4CTUN1Z5STG21110 |
|  | 23 | **RHD4-02-002 - Tunnel 1 - Under Ground Walls - Stage 2 (Up to 6m)** |  | 2026-06-25 | 2026-07-21 |  |
| RHD4CTUN1Z5STG21130 |  | shuttering Works of Three Sides for Walls <Stage 02>-TUN1-Z5-STG2-Concrete Works-Under Ground Walls | 5d | 2026-06-25 | 2026-06-30 | RHD4CTUN1Z5STG21080 SS, RHD4CTUN1Z5STG21110 |
| RHD4CTUN1Z5STG21140 |  | Steel fixing Works for Walls <Stage 02>-TUN1-Z5-STG2-Concrete Works-Under Ground Walls | 5d | 2026-07-01 | 2026-07-06 | RHD4CTUN1Z5STG21130 |
| RHD4CTUN1Z5STG21150 |  | shuttering Works of the 4th Side for Walls <Stage 02>-TUN1-Z5-STG2-Concrete Works-Under Ground Walls | 5d | 2026-07-07 | 2026-07-12 | RHD4CTUN1Z5STG21140 |
| RHD4CTUN1Z5STG21160 |  | casting of reinforced concrete for Walls <Stage 02>-TUN1-Z5-STG2-Concrete Works-Under Ground Walls | 4d | 2026-07-13 | 2026-07-16 | RHD4CTUN1Z5STG21150, RHD4CZ5A014ST3400, RHD4ENMARAPPTU100 |
| RHD4CTUN1Z5STG21170 |  | De-shuttering and Curing Works for Walls <Stage 02>-TUN1-Z5-STG2-Concrete Works-Under Ground Walls | 5d | 2026-07-17 | 2026-07-21 | RHD4CTUN1Z5STG21160, RHD4CTUN1Z5STG21120 |
|  | 24 | **RHD4-02-002 - Tunnel 1 - Under Ground Walls - Stage 3 (Up to 9m)** |  | 2026-06-25 | 2026-07-28 |  |
| RHD4CTUN1Z5STG21180 |  | shuttering Works of Three Sides for Walls <Stage 03>-TUN1-Z5-STG2-Concrete Works-Under Ground Walls | 5d | 2026-06-25 | 2026-06-30 | RHD4CTUN1Z5STG21130 SS |
| RHD4CTUN1Z5STG21190 |  | Steel fixing Works for Walls <Stage 03>-TUN1-Z5-STG2-Concrete Works-Under Ground Walls | 5d | 2026-07-01 | 2026-07-06 | RHD4CTUN1Z5STG21180 |
| RHD4CTUN1Z5STG21200 |  | shuttering Works of the 4th Side for Walls <Stage 03>-TUN1-Z5-STG2-Concrete Works-Under Ground Walls | 5d | 2026-07-07 | 2026-07-12 | RHD4CTUN1Z5STG21190 |

| ID | WBS | Task | Duration | Start | Finish | Predecessors |
| --- | --- | --- | --- | --- | --- | --- |
| RHD4CTUN1Z5STG21210 |  | casting of reinforced concrete for Walls <Stage 03>-TUN1-Z5-STG2-Concrete Works-Under Ground Walls | 4d | 2026-07-13 | 2026-07-16 | RHD4CTUN1Z5STG21200, RHD4ENMARAPPTU100 |
| RHD4CTUN1Z5STG21220 |  | De-shuttering and Curing Works for Walls <Stage 03>-TUN1-Z5-STG2-Concrete Works-Under Ground Walls | 4d | 2026-07-18 | 2026-07-21 | RHD4CTUN1Z5STG21210 |
| RHD4CTUN1Z5STG21230 |  | Installation of 2 layers of bitumenous waterproofing membrane<Stage 03>-TUN1-Z5-STG2-Concrete Works-Under Ground Walls | 4d | 2026-07-22 | 2026-07-26 | RHD4CTUN1Z5STG21220 |
| RHD4CTUN1Z5STG21240 |  | Installation of Protection board for waterproofing <Stage 03>-TUN1-Z5-STG2-Concrete Works-Under Ground Walls | 2d | 2026-07-27 | 2026-07-28 | RHD4CTUN1Z5STG21230 |
|  | 25 | **RHD4-02-002 - Tunnel 1 - Concrete Works - Slab** |  | 2026-07-29 | 2026-09-27 |  |
| RHD4CTUN1Z5STG21250 |  | shuttering Works for Beams And Slab-TUN1-Z5-STG2-Concrete Works-Slab | 10d | 2026-07-29 | 2026-08-09 | RHD4CTUN1Z5STG21240 |
| RHD4CTUN1Z5STG21260 |  | Steel fixing Works for Beams And Slab-TUN1-Z5-STG2-Concrete Works-Slab | 12d | 2026-08-10 | 2026-08-23 | RHD4CTUN1Z5STG21250 |
| RHD4CTUN1Z5STG21270 |  | casting of reinforced concrete for Beams And Slab-TUN1-Z5-STG2-Concrete Works-Slab | 8d | 2026-08-24 | 2026-09-01 | RHD4CTUN1Z5STG21260, RHD4CTUN1Z5STG21250, RHD4ENMARAPPTU100 |
| RHD4CTUN1Z5STG21280 |  | De-shuttering and Curing Works for Beams And Slab-TUN1-Z5-STG2-Concrete Works-Slab | 26d | 2026-09-02 | 2026-09-27 | RHD4CTUN1Z5STG21270 |
|  | 26 | **RHD4-02-002 - Tunnel 1 - Concrete Works - Concrete Parapet** |  | 2026-09-28 | 2026-10-13 |  |
| RHD4CTUN1Z5STG21290 |  | shuttering Works for Parapet-TUN1-Z5-STG2-Concrete Works-Concrete Parapet | 3d | 2026-09-28 | 2026-09-30 | RHD4CTUN1Z5STG21280 SS, RHD4CTUN1Z5STG21280 |
| RHD4CTUN1Z5STG21300 |  | Steel fixing Works for Parapet-TUN1-Z5-STG2-Concrete Works-Concrete Parapet | 5d | 2026-10-01 | 2026-10-06 | RHD4CTUN1Z5STG21290 |
| RHD4CTUN1Z5STG21310 |  | casting of reinforced concrete for Parapet-TUN1-Z5-STG2-Concrete Works-Concrete Parapet | 2d | 2026-10-07 | 2026-10-08 | RHD4CTUN1Z5STG21300, RHD4ENMARAPPTU100 |
| RHD4CTUN1Z5STG21320 |  | De-shuttering and Curing Works for Parapet-TUN1-Z5-STG2-Concrete Works-Concrete Parapet | 5d | 2026-10-09 | 2026-10-13 | RHD4CTUN1Z5STG21310 |
|  | 27 | **RDH4-01-001 - Tunnel 1 - Painting Works - Finishing** |  | 2026-09-28 | 2026-10-02 |  |
| RHD4CTUN1Z5STG21900 |  | Tunnel Painting-TUN1-Z5-STG2-Painting Works-Finishing | 5d | 2026-09-28 | 2026-10-02 | RHD4CTUN1Z5STG21280 |
|  | 27 | **RHD4-02-002 - Tunnel 1 - STG 2 - MEP Works** |  | 2027-01-24 | 2027-05-29 |  |
|  | 28 | **RHD4-02-002 - Tunnel 1 - MEP Works - Electrical Works** |  | 2027-01-24 | 2027-05-29 |  |
|  | 29 | **RHD4-02-002 - Tunnel 1 - Electrical Works - Low Voltage** |  | 2027-01-24 | 2027-05-29 |  |
| RHD4CTUN1Z5STG21330 |  | Marking, Cutting & Chasing and Putting LV Conduits in Walls-TUN1-Z5-STG2-MEP Works-Electrical Works | 4d | 2027-01-24 | 2027-01-27 | RHD4CTUN1Z5STG21320, RHD4CZ3C083IRR1504, RHD4CTUN1Z5STG21900 |
| RHD4CTUN1Z5STG21340 |  | Hanger & Support Installation for LV System-TUN1-Z5-STG2-MEP Works-Electrical Works | 16d | 2027-01-28 | 2027-02-15 | RHD4CTUN1Z5STG21330 |
| RHD4CTUN1Z5STG21350 |  | Cable Tray Installation for LV System-TUN1-Z5-STG2-MEP Works-Electrical Works | 16d | 2027-02-16 | 2027-03-07 | RHD4CTUN1Z5STG21340 |
| RHD4CTUN1Z5STG21360 |  | Exposed LV Conduits Installation-TUN1-Z5-STG2-MEP Works-Electrical Works | 16d | 2027-03-08 | 2027-03-29 | RHD4CTUN1Z5STG21350 |
| RHD4CTUN1Z5STG21370 |  | Pulling Cables & Wires for LV Systems-TUN1-Z5-STG2-MEP Works-Electrical Works | 16d | 2027-03-30 | 2027-04-17 | RHD4CTUN1Z5STG21360 |
| RHD4CTUN1Z5STG21390 |  | Wiring Devices Installation for LV System -TUN1-Z5-STG2-MEP Works-Electrical Works | 16d | 2027-04-18 | 2027-05-05 | RHD4CTUN1Z5STG21370 |
| RHD4CTUN1Z5STG21380 |  | Lighting Fixtures Installation-TUN1-Z5-STG2-MEP Works-Electrical Works | 16d | 2027-05-06 | 2027-05-29 | RHD4CTUN1Z5STG21370, RHD4CTUN1Z5STG21390, RHD4CTUN1Z5STG21490, RHD4CTUN1Z5STG11240, RHD4CTUN1Z5STG31240 |
|  | 30 | **RHD4-02-002 - Tunnel 1 - Electrical Works - Light Current** |  | 2027-03-08 | 2027-04-26 |  |
| RHD4CTUN1Z5STG21400 |  | Marking, Cutting & Chasing and Putting LC Conduits-TUN1-Z5-STG2-MEP Works-Electrical Works | 7d | 2027-03-08 | 2027-03-18 | RHD4CTUN1Z5STG21330, RHD4CTUN1Z5STG21350 |
| RHD4CTUN1Z5STG21410 |  | Hanger & Support Installation for LC System-TUN1-Z5-STG2-MEP Works-Electrical Works | 7d | 2027-03-20 | 2027-03-27 | RHD4CTUN1Z5STG21400 |
| RHD4CTUN1Z5STG21420 |  | Cable Trunk Installation for LC System-TUN1-Z5-STG2-MEP Works-Electrical Works | 7d | 2027-03-28 | 2027-04-04 | RHD4CTUN1Z5STG21410 |
| RHD4CTUN1Z5STG21430 |  | Exposed LC Conduits Installation-TUN1-Z5-STG2-MEP Works-Electrical Works | 7d | 2027-04-05 | 2027-04-12 | RHD4CTUN1Z5STG21420 |
| RHD4CTUN1Z5STG21440 |  | Pulling Cables for lighting control system (DALI)-TUN1-Z5-STG2-MEP Works-Electrical Works | 3d | 2027-04-13 | 2027-04-15 | RHD4CTUN1Z5STG21430 |
| RHD4CTUN1Z5STG21450 |  | Pulling Cables for Fire Alarm System-TUN1-Z5-STG2-MEP Works-Electrical Works | 3d | 2027-04-13 | 2027-04-15 | RHD4CTUN1Z5STG21430 |
| RHD4CTUN1Z5STG21460 |  | Pulling Cables for IP CCTV-TUN1-Z5-STG2-MEP Works-Electrical Works | 4d | 2027-04-13 | 2027-04-17 | RHD4CTUN1Z5STG21430 |
| RHD4CTUN1Z5STG21470 |  | lighting control system (DALI) Devices Installation -TUN1-Z5-STG2-MEP Works-Electrical Works | 3d | 2027-04-17 | 2027-04-19 | RHD4CTUN1Z5STG21440 |
| RHD4CTUN1Z5STG21480 |  | Fire Alarm Devices Installation-TUN1-Z5-STG2-MEP Works-Electrical Works | 3d | 2027-04-20 | 2027-04-22 | RHD4CTUN1Z5STG21450, RHD4CTUN1Z5STG21470 |
| RHD4CTUN1Z5STG21490 |  | IP CCTV Devices Installation-TUN1-Z5-STG2-MEP Works-Electrical Works | 3d | 2027-04-24 | 2027-04-26 | RHD4CTUN1Z5STG21460, RHD4CTUN1Z5STG21480 |
|  | 31 | **RHD4-02-002 - Tunnel 1 - Stage 03** |  | 2026-08-10 | 2026-11-15 |  |
|  | 32 | **RHD4-02-002 - Tunnel 1 - STG 3 - Concrete works** |  | 2026-08-10 | 2026-11-15 |  |
|  | 33 | **RHD4-02-002 - Tunnel 1 - Concrete works - PC Foundation** |  | 2026-08-10 | 2026-08-20 |  |
| RHD4CTUN1Z5STG31000 |  | PC Footing Shuttering Works -TUN1-Z5-STG3-Concrete works -PC Foundation | 2d | 2026-08-10 | 2026-08-11 | RHD4ENMSTUN2000, RHD4ENMSTUN2010, RHD4ENMARAPPTU100, RHD4CTUN1Z5STG21060, RHD4CTUN1Z5STG21050, RHD4CTUN1Z5STG21030, RHD4CTUN1Z5STG21040, RHD4CTUN1Z5STG21250 |
| RHD4CTUN1Z5STG31010 |  | Casting of 100mm Blinding Concrete Under Foundation-TUN1-Z5-STG3-Concrete works -PC Foundation | 2d | 2026-08-12 | 2026-08-13 | RHD4CTUN1Z5STG31000 |
| RHD4CTUN1Z5STG31020 |  | Applying 2 layers of waterproofing bitumenous membrane 4mm below footings-TUN1-Z5-STG3-Concrete works -PC Foundation | 3d | 2026-08-15 | 2026-08-17 | RHD4CTUN1Z5STG31010 |
| RHD4CTUN1Z5STG31030 |  | Casting of 50mm Screed for Membrane Protection-TUN1-Z5-STG3-Concrete works -PC Foundation | 3d | 2026-08-18 | 2026-08-20 | RHD4CTUN1Z5STG31020 |
|  | 34 | **RHD4-02-002 - Tunnel 1 - Concrete works - RC Foundation** |  | 2026-08-22 | 2026-09-11 |  |
| RHD4CTUN1Z5STG31040 |  | Shuttering Works for RC Footing-TUN1-Z5-STG3-Concrete works -RC Foundation | 5d | 2026-08-22 | 2026-08-26 | RHD4CTUN1Z5STG31030, RHD4ENMSTUN2010 |
| RHD4CTUN1Z5STG31050 |  | Steel fixing Works for RC Footing -TUN1-Z5-STG3-Concrete works -RC Foundation | 5d | 2026-08-27 | 2026-09-01 | RHD4CTUN1Z5STG31040 |
| RHD4CTUN1Z5STG31060 |  | casting of reinforced concrete for RC Footing -TUN1-Z5-STG3-Concrete works -RC Foundation | 4d | 2026-09-02 | 2026-09-06 | RHD4CTUN1Z5STG31050, RHD4ENMARAPPTU100 |
| RHD4CTUN1Z5STG31070 |  | De-shuttering and Curing Works for RC Footing -TUN1-Z5-STG3-Concrete works -RC Foundation | 5d | 2026-09-07 | 2026-09-11 | RHD4CTUN1Z5STG31060 |
|  | 35 | **RHD4-02-002 - Tunnel 1 - Concrete works - Under Ground Walls** |  | 2026-09-12 | 2026-11-15 |  |
|  | 36 | **RHD4-02-002 - Tunnel 1 - Under Ground Walls - Stage 1 (Up to 3m)** |  | 2026-09-12 | 2026-10-30 |  |
| RHD4CTUN1Z5STG31080 |  | shuttering Works of Three Sides for Walls <Stage 01>-TUN1-Z5-STG3-Concrete works -Under Ground Walls | 5d | 2026-09-12 | 2026-09-16 | RHD4CTUN1Z5STG31070 |
| RHD4CTUN1Z5STG31090 |  | Steel fixing Works for Walls <Stage 01>-TUN1-Z5-STG3-Concrete works -Under Ground Walls | 5d | 2026-09-17 | 2026-09-22 | RHD4CTUN1Z5STG31080 |
| RHD4CTUN1Z5STG31100 |  | shuttering Works of the 4th Side for Walls <Stage 01>-TUN1-Z5-STG3-Concrete works -Under Ground Walls | 5d | 2026-09-24 | 2026-09-29 | RHD4CTUN1Z5STG31090 |
| RHD4CTUN1Z5STG31110 |  | casting of reinforced concrete for Walls <Stage 01>-TUN1-Z5-STG3-Concrete works -Under Ground Walls | 4d | 2026-09-30 | 2026-10-04 | RHD4CTUN1Z5STG31100, RHD4ENMARAPPTU100 |
| RHD4CTUN1Z5STG31120 |  | De-shuttering and Curing Works for Walls <Stage 01>-TUN1-Z5-STG3-Concrete works -Under Ground Walls | 4d | 2026-10-27 | 2026-10-30 | RHD4CTUN1Z5STG31110, RHD4CTUN1Z5STG31170 |
|  | 37 | **RHD4-02-002 - Tunnel 1 - Under Ground Walls - Stage 2 (Up to 6m)** |  | 2026-10-05 | 2026-10-26 |  |
| RHD4CTUN1Z5STG31130 |  | shuttering Works of Three Sides for Walls <Stage 02>-TUN1-Z5-STG3-Concrete works -Under Ground Walls | 4d | 2026-10-05 | 2026-10-08 | RHD4CTUN1Z5STG31080 SS, RHD4CTUN1Z5STG31110 |
| RHD4CTUN1Z5STG31140 |  | Steel fixing Works for Walls <Stage 02>-TUN1-Z5-STG3-Concrete works -Under Ground Walls | 4d | 2026-10-10 | 2026-10-13 | RHD4CTUN1Z5STG31130 |
| RHD4CTUN1Z5STG31150 |  | shuttering Works of the 4th Side for Walls <Stage 02>-TUN1-Z5-STG3-Concrete works -Under Ground Walls | 4d | 2026-10-14 | 2026-10-18 | RHD4CTUN1Z5STG31140 |
| RHD4CTUN1Z5STG31160 |  | casting of reinforced concrete for Walls <Stage 02>-TUN1-Z5-STG3-Concrete works -Under Ground Walls | 4d | 2026-10-19 | 2026-10-22 | RHD4CTUN1Z5STG31150, RHD4ENMARAPPTU100 |
| RHD4CTUN1Z5STG31170 |  | De-shuttering and Curing Works for Walls <Stage 02>-TUN1-Z5-STG3-Concrete works -Under Ground Walls | 4d | 2026-10-23 | 2026-10-26 | RHD4CTUN1Z5STG31160 |
|  | 38 | **RHD4-02-002 - Tunnel 1 - Under Ground Walls - Stage 3 (Up to 9m)** |  | 2026-10-05 | 2026-11-15 |  |
| RHD4CTUN1Z5STG31180 |  | shuttering Works of Three Sides for Walls <Stage 03>-TUN1-Z5-STG3-Concrete works -Under Ground Walls | 4d | 2026-10-05 | 2026-10-08 | RHD4CTUN1Z5STG31130 SS |
| RHD4CTUN1Z5STG31190 |  | Steel fixing Works for Walls <Stage 03>-TUN1-Z5-STG3-Concrete works -Under Ground Walls | 4d | 2026-10-10 | 2026-10-13 | RHD4CTUN1Z5STG31180 |
| RHD4CTUN1Z5STG31200 |  | shuttering Works of the 4th Side for Walls <Stage 03>-TUN1-Z5-STG3-Concrete works -Under Ground Walls | 4d | 2026-10-14 | 2026-10-18 | RHD4CTUN1Z5STG31190 |
| RHD4CTUN1Z5STG31210 |  | casting of reinforced concrete for Walls <Stage 03>-TUN1-Z5-STG3-Concrete works -Under Ground Walls | 4d | 2026-10-19 | 2026-10-22 | RHD4CTUN1Z5STG31200, RHD4ENMARAPPTU100 |
| RHD4CTUN1Z5STG31220 |  | De-shuttering and Curing Works for Walls <Stage 03>-TUN1-Z5-STG3-Concrete works -Under Ground Walls | 4d | 2026-10-24 | 2026-10-27 | RHD4CTUN1Z5STG31210 |
| RHD4CTUN1Z5STG31230 |  | Installation of 2 layers of 4mm bitumenous waterproofing membrane <Stage 03>-TUN1-Z5-STG3-Concrete works -Under Ground W | 8d | 2026-10-28 | 2026-11-05 | RHD4CTUN1Z5STG31220, RHD4CTUN1Z5STG31170, RHD4CTUN1Z5STG11170 |
| RHD4CTUN1Z5STG31240 |  | Installation of Protection board for waterproofing <Stage 03>-TUN1-Z5-STG3-Concrete works -Under Ground Walls | 8d | 2026-11-07 | 2026-11-15 | RHD4CTUN1Z5STG31230, RHD4CTUN1Z5STG31120, RHD4CTUN1Z5STG11240, RHD4CTUN1Z5STG21900 |

| ID | WBS | Task | Duration | Start | Finish | Predecessors |
| --- | --- | --- | --- | --- | --- | --- |
|  | 5 | **RHD4-02-002 - Tunnel 1 - Stage 01** |  | 2026-08-10 | 2026-11-02 |  |
|  | 6 | **RHD4-02-002 - Tunnel 1 - STG 1 - Concrete Works** |  | 2026-08-10 | 2026-11-02 |  |
|  | 7 | **RHD4-02-002 - Tunnel 1 - Concrete Works - PC Foundation** |  | 2026-08-10 | 2026-08-18 |  |
| RHD4CTUN1Z5STG11000 |  | PC Footing Shuttering Works -TUN1-Z5-STG1-Concrete Works-PC Foundation | 2d | 2026-08-10 | 2026-08-11 | RHD4ENTUN1APPSTC1000, RHD4CZ5L07RW1000, RHD4ENMSTUN2000, RHD4ENMSTUN2010, RHD4ENMARAPPTU100, RHD4CTUN1Z5STG21060, RHD4ENTUN1APPSTC1200, RHD4GNPPSD1100, RHD4ENSDZ6SUBRD220, RHD4ENSDTUN1SUB1200, RHD4ENTUN1APPSTC1100, RHD4ENSDTUN1SUB1100, RHD4CTUN1Z5STG21050, RHD4CTUN1Z5STG21030, RHD4CTUN1Z5STG21040, RHD4CTUN1Z5STG21250 |
| RHD4CTUN1Z5STG11010 |  | Casting of 100mm Blinding Concrete Under Foundation-TUN1-Z5-STG1-Concrete Works-PC Foundation | 2d | 2026-08-12 | 2026-08-13 | RHD4CTUN1Z5STG11000 |
| RHD4CTUN1Z5STG11020 |  | Applying 2 layers of waterproofing bitumenous membrane 4mm below footings-TUN1-Z5-STG1-Concrete Works-PC Foundation | 2d | 2026-08-15 | 2026-08-16 | RHD4CTUN1Z5STG11010 |
| RHD4CTUN1Z5STG11030 |  | Casting of 50mm Screed for Membrane Protection-TUN1-Z5-STG1-Concrete Works-PC Foundation | 2d | 2026-08-17 | 2026-08-18 | RHD4CTUN1Z5STG11020 |
|  | 8 | **RHD4-02-002 - Tunnel 1 - Concrete Works - RC Foundation** |  | 2026-08-19 | 2026-09-07 |  |
| RHD4CTUN1Z5STG11040 |  | Shuttering Works for RC Footing-TUN1-Z5-STG1-Concrete Works-RC Foundation | 4d | 2026-08-19 | 2026-08-23 | RHD4CTUN1Z5STG11030, RHD4ENTUN1APPSTC1000, RHD4ENMSTUN2000, RHD4ENMSTUN2010, RHD4ENTUN1APPSTC1100, RHD4GNPPSD1100, RHD4ENSDZ6SUBRD220, RHD4ENSDTUN1SUB1100 |
| RHD4CTUN1Z5STG11050 |  | Steel fixing Works for RC Footing -TUN1-Z5-STG1-Concrete Works-RC Foundation | 5d | 2026-08-24 | 2026-08-29 | RHD4CTUN1Z5STG11040, RHD4ENTUN1APPSTC1200, RHD4GNPPSD1100, RHD4ENSDZ6SUBRD220, RHD4ENSDTUN1SUB1200 |
| RHD4CTUN1Z5STG11060 |  | casting of reinforced concrete for RC Footing -TUN1-Z5-STG1-Concrete Works-RC Foundation | 4d | 2026-08-30 | 2026-09-02 | RHD4CTUN1Z5STG11050, RHD4ENMARAPPTU100 |
| RHD4CTUN1Z5STG11070 |  | De-shuttering and Curing Works for RC Footing -TUN1-Z5-STG1-Concrete Works-RC Foundation | 5d | 2026-09-03 | 2026-09-07 | RHD4CTUN1Z5STG11060 |
|  | 9 | **RHD4-02-002 - Tunnel 1 - Concrete Works - Under Ground Walls** |  | 2026-09-08 | 2026-11-02 |  |
|  | 10 | **RHD4-02-002 - Tunnel 1 - Under Ground Walls - Stage 1 (Up to 3m)** |  | 2026-09-08 | 2026-10-03 |  |
| RHD4CTUN1Z5STG11080 |  | shuttering Works of Three Sides for Walls <Stage 01>-TUN1-Z5-STG1-Concrete Works-Under Ground Walls | 5d | 2026-09-08 | 2026-09-13 | RHD4CTUN1Z5STG11070, RHD4ENMSTUN2000, RHD4ENMSTUN2010 |
| RHD4CTUN1Z5STG11090 |  | Steel fixing Works for Walls <Stage 01>-TUN1-Z5-STG1-Concrete Works-Under Ground Walls | 5d | 2026-09-14 | 2026-09-19 | RHD4CTUN1Z5STG11080 |
| RHD4CTUN1Z5STG11100 |  | shuttering Works of the 4th Side for Walls <Stage 01>-TUN1-Z5-STG1-Concrete Works-Under Ground Walls | 4d | 2026-09-20 | 2026-09-24 | RHD4CTUN1Z5STG11090 |
| RHD4CTUN1Z5STG11110 |  | casting of reinforced concrete for Walls <Stage 01>-TUN1-Z5-STG1-Concrete Works-Under Ground Walls | 4d | 2026-09-26 | 2026-09-29 | RHD4CTUN1Z5STG11100, RHD4ENMARAPPTU100 |
| RHD4CTUN1Z5STG11120 |  | De-shuttering and Curing Works for Walls <Stage 01>-TUN1-Z5-STG1-Concrete Works-Under Ground Walls | 4d | 2026-09-30 | 2026-10-03 | RHD4CTUN1Z5STG11110 |
|  | 11 | **RHD4-02-002 - Tunnel 1 - Under Ground Walls - Stage 2 (Up to 6m)** |  | 2026-10-04 | 2026-10-25 |  |
| RHD4CTUN1Z5STG11130 |  | shuttering Works of Three Sides for Walls <Stage 02>-TUN1-Z5-STG1-Concrete Works-Under Ground Walls | 4d | 2026-10-04 | 2026-10-07 | RHD4CTUN1Z5STG11080 SS, RHD4CTUN1Z5STG11110, RHD4CTUN1Z5STG11120 |
| RHD4CTUN1Z5STG11140 |  | Steel fixing Works for Walls <Stage 02>-TUN1-Z5-STG1-Concrete Works-Under Ground Walls | 4d | 2026-10-08 | 2026-10-12 | RHD4CTUN1Z5STG11130 |
| RHD4CTUN1Z5STG11150 |  | shuttering Works of the 4th Side for Walls <Stage 02>-TUN1-Z5-STG1-Concrete Works-Under Ground Walls | 4d | 2026-10-13 | 2026-10-17 | RHD4CTUN1Z5STG11140 |
| RHD4CTUN1Z5STG11160 |  | casting of reinforced concrete for Walls <Stage 02>-TUN1-Z5-STG1-Concrete Works-Under Ground Walls | 4d | 2026-10-18 | 2026-10-21 | RHD4CTUN1Z5STG11150, RHD4ENMARAPPTU100 |
| RHD4CTUN1Z5STG11170 |  | De-shuttering and Curing Works for Walls <Stage 02>-TUN1-Z5-STG1-Concrete Works-Under Ground Walls | 4d | 2026-10-22 | 2026-10-25 | RHD4CTUN1Z5STG11160 |
|  | 12 | **RHD4-02-002 - Tunnel 1 - Under Ground Walls - Stage 3 (Up to 9m)** |  | 2026-10-04 | 2026-11-02 |  |
| RHD4CTUN1Z5STG11180 |  | shuttering Works of Three Sides for Walls <Stage 03>-TUN1-Z5-STG1-Concrete Works-Under Ground Walls | 4d | 2026-10-04 | 2026-10-07 | RHD4CTUN1Z5STG11130 SS |
| RHD4CTUN1Z5STG11190 |  | Steel fixing Works for Walls <Stage 03>-TUN1-Z5-STG1-Concrete Works-Under Ground Walls | 4d | 2026-10-08 | 2026-10-12 | RHD4CTUN1Z5STG11180 |
| RHD4CTUN1Z5STG11200 |  | shuttering Works of the 4th Side for Walls <Stage 03>-TUN1-Z5-STG1-Concrete Works-Under Ground Walls | 4d | 2026-10-13 | 2026-10-17 | RHD4CTUN1Z5STG11190 |
| RHD4CTUN1Z5STG11210 |  | casting of reinforced concrete for Walls <Stage 03>-TUN1-Z5-STG1-Concrete Works-Under Ground Walls | 3d | 2026-10-18 | 2026-10-20 | RHD4CTUN1Z5STG11200, RHD4ENMARAPPTU100 |
| RHD4CTUN1Z5STG11220 |  | De-shuttering and Curing Works for Walls <Stage 03>-TUN1-Z5-STG1-Concrete Works-Under Ground Walls | 4d | 2026-10-21 | 2026-10-24 | RHD4CTUN1Z5STG11210 |
| RHD4CTUN1Z5STG11230 |  | Installation of 2 layers of bitumenous waterproofing membrane<Stage 03>-TUN1-Z5-STG1-Concrete Works-Under Ground Walls | 4d | 2026-10-25 | 2026-10-28 | RHD4CTUN1Z5STG11220 |
| RHD4CTUN1Z5STG11240 |  | Installation of Protection board for waterproofing <Stage 03>-TUN1-Z5-STG1-Concrete Works-Under Ground Walls | 4d | 2026-10-29 | 2026-11-02 | RHD4CTUN1Z5STG11230, RHD4CTUN1Z5STG11120, RHD4CTUN1Z5STG11170 |
|  | 1 | **Stations** |  | 2026-12-05 | 2027-10-21 |  |
|  | 160 | **Storm Lift Station 01** |  | 2026-12-05 | 2027-10-21 |  |
|  | 161 | **RHD4-02-002-Storm Lift Station 01-Wet Well Structure And Valve Chamber** |  | 2026-12-05 | 2027-04-01 |  |
|  | 162 | **RHD4-02-002-STL1-Wet Well** |  | 2026-12-05 | 2027-04-01 |  |
|  | 163 | **RHD4-02-002-STL1-B07-Concrete works Wet Well** |  | 2026-12-05 | 2027-01-03 |  |
| RHD4CSTL1B07D021001 |  | Lean Concrete for Plain Concrete for Wet Well - (B7.03 00 00 .01)-STL1-B07-D02 | 6d | 2026-12-05 | 2026-12-10 | RHD4CTUN1Z5STG31220, RHD4CTUN1Z5STG11220, RHD4CZ3C083PT4200 |
| RHD4CSTL1B07D021002 |  | Water proofing membrance for Wet well structure - (B7.07 13 13.01)-STL1-B07-D02 | 8d | 2026-12-12 | 2026-12-20 | RHD4CSTL1B07D021001, RHD4PRSHLDOSLFS1200, RHD4PRSHLSTAGLFS1200 |
| RHD4CSTL1B07D021003 |  | Screed for Wet well structurefor Wet Well - (B7.03 00 00 .04)-STL1-B07-D02 | 3d | 2026-12-21 | 2026-12-23 | RHD4CSTL1B07D021002, RHD4ENSTL1APPSTC1000 |
| RHD4CSTL1B07D021004 |  | Steel Fixing foundations for Wet well structure - (B7.03 00 00 .05)-STL1-B07-D02 | 4d | 2026-12-24 | 2026-12-28 | RHD4CSTL1B07D021003, RHD4ENSTL1APPSTC1000 |
| RHD4CSTL1B07D021005 |  | Formwork foundations for Wet well structure - (B7.03 00 00 .05)-STL1-B07-D02 | 2d | 2026-12-29 | 2026-12-30 | RHD4CSTL1B07D021004, RHD4ENSTL1APPSTC1000 |
| RHD4CSTL1B07D021006 |  | RC Casting foundations for Wet well structure - (B7.03 00 00 .05)-STL1-B07-D02 | 3d | 2026-12-31 | 2027-01-03 | RHD4CSTL1B07D021005 |
|  | 164 | **RHD4-02-002-STL1-B07-Valve Chamber** |  | 2027-01-04 | 2027-01-23 |  |
| RHD4CSTL1B07D021008 |  | Water proofing membrance for Wet well structure - (B7.07 13 13.01)-STL1-B07-D02 | 4d | 2027-01-04 | 2027-01-07 | RHD4PRSHLDOSLFS1200, RHD4PRSHLSTAGLFS1200, RHD4CSTL1B07D021006 |
| RHD4CSTL1B07D021009 |  | Screed for Wet well structure - (B7.03 00 00 .04)-STL1-B07-D02 | 3d | 2027-01-09 | 2027-01-11 | RHD4CSTL1B07D021008, RHD4ENSTL1APPSTC1000 |
| RHD4CSTL1B07D021010 |  | Steel Fixing foundations for Wet well structure - (B7.03 00 00 .05)-STL1-B07-D02 | 4d | 2027-01-12 | 2027-01-16 | RHD4CSTL1B07D021009, RHD4ENSTL1APPSTC1000 |
| RHD4CSTL1B07D021011 |  | Formwork foundations for Wet well structure - (B7.03 00 00 .05)-STL1-B07-D02 | 4d | 2027-01-17 | 2027-01-20 | RHD4CSTL1B07D021010, RHD4ENSTL1APPSTC1000 |
| RHD4CSTL1B07D021012 |  | RC Casting foundations for Wet well structure - (B7.03 00 00 .05)-STL1-B07-D02 | 2d | 2027-01-21 | 2027-01-23 | RHD4CSTL1B07D021011 |
|  | 165 | **RHD4-02-002-STL1-B07-Retaining Walls & Slab** |  | 2027-01-24 | 2027-02-11 |  |
| RHD4CSTL1B07D021013 |  | Steel Fixing for Wet well structure - (B7.03 00 00 .07)-STL1-B07-D02 | 5d | 2027-01-24 | 2027-01-28 | RHD4CSTL1B07D021012, RHD4ENSTL1APPSTC1000 |
| RHD4CSTL1B07D021014 |  | Formwork for Wet well structure - (B7.03 00 00 .07)-STL1-B07-D02 | 4d | 2027-01-30 | 2027-02-02 | RHD4CSTL1B07D021013, RHD4ENSTL1APPSTC1000 |
| RHD4CSTL1B07D021015 |  | RC Casting for Wet well structure - (B7.03 00 00 .07)-STL1-B07-D02 | 4d | 2027-02-03 | 2027-02-07 | RHD4CSTL1B07D021014, RHD4ENSTL1APPSTC1000 |
| RHD4CSTL1B07D021016 |  | Water protection Board membrance for Wet well structure - (B7.07 13 13.02)-STL1-B07-D02 | 4d | 2027-02-08 | 2027-02-11 | RHD4CSTL1B07D021015, RHD4PRSHLDOSLFS1200, RHD4PRSHLSTAGLFS1200 |
|  | 166 | **RHD4-02-002-STL1-B07-Finishes** |  | 2027-02-13 | 2027-02-23 |  |
| RHD4CSTL1B07D091017 |  | Epoxy Coating for Wet well structure - (B7.09 96 56.01)-STL1-B07-D09 | 4d | 2027-02-13 | 2027-02-16 | RHD4CSTL1B07D021016, RHD4PRSHLDOSLFS1600, RHD4PRSHLSTAGLFS1600, RHD4ENSTL1APPARC1100, RHD4GNPPSD1100, RHD4ENSDZ6SUBRD220, RHD4ENSDSTL1SUB2000 |
| RHD4CSTL1B07D091018 |  | External Plastering for walls 20mm - (B7.09 24 00.02)-STL1-B07-D09 | 5d | 2027-02-17 | 2027-02-23 | RHD4CSTL1B07D091017, RHD4ENSTL1APPARC1100, RHD4GNPPSD1100, RHD4ENSDZ6SUBRD220, RHD4ENSDSTL1SUB2000 |
|  | 167 | **RHD4-02-002-STL1-B07-Metal Doors** |  | 2027-02-24 | 2027-03-01 |  |
| RHD4CSTL1B07D051022 |  | metal floor door size (1000x1000mm) for Wet well structure - (B7.08 31 13.04)-STL1-B07-D05 | 5d | 2027-02-24 | 2027-03-01 | RHD4PRSHLDOSLFS1400, RHD4PRSHLSTAGLFS1400, RHD4CSTL1B07D091018, RHD4PRSHLDOSLFS1500, RHD4PRSHLSTAGLFS1500, RHD4ENSTL1APPARC1100, RHD4GNPPSD1100, RHD4ENSDZ6SUBRD220, RHD4ENSDSTL1SUB2000 |
|  | 168 | **RHD4-02-002-STL1-B07-Screening Container** |  | 2027-03-02 | 2027-03-04 |  |
| RHD4CSTL1B07D151023 |  | Steel Container Screening Installation - (B7.46 21 00.01)-STL1-B07-D15 | 3d | 2027-03-02 | 2027-03-04 | RHD4CSTL1B07D051022, RHD4PRLOLSTAGLFS1000, RHD4ENSTL1APPMEC1200, RHD4GNPPSD1100, RHD4ENSDZ6SUBRD220, RHD4ENSDSTL1SUB3000 |
|  | 169 | **RHD4-02-002-STL1-B07-Motorized basket screen** |  | 2027-03-06 | 2027-03-28 |  |
| RHD4CSTL1B07D151024 |  | Basket Screen Frame Mounting - (B7.46 21 00.011)-STL1-B07-D15 | 5d | 2027-03-06 | 2027-03-14 | RHD4CSTL1B07D151023, RHD4PRSHLDOSLFS1900, RHD4PRSHLSTAGLFS1900, RHD4ENSTL1APPMEC1200, RHD4GNPPSD1100, RHD4ENSDZ6SUBRD220, RHD4ENSDSTL1SUB3000 |
| RHD4CSTL1B07D151025 |  | Basket Screen Alignment - (B7.46 21 00.011)-STL1-B07-D15 | 6d | 2027-03-15 | 2027-03-21 | RHD4CSTL1B07D151024, RHD4PRSHLDOSLFS1900, RHD4PRSHLSTAGLFS1900, RHD4ENSTL1APPMEC1200, RHD4GNPPSD1100, RHD4ENSDZ6SUBRD220, RHD4ENSDSTL1SUB3000 |
| RHD4CSTL1B07D151026 |  | Motor and Drive System Installation - (B7.46 21 00.011)-STL1-B07-D15 | 6d | 2027-03-22 | 2027-03-28 | RHD4CSTL1B07D151025, RHD4ENSTL1APPMEC1200, RHD4GNPPSD1100, RHD4ENSDZ6SUBRD220, RHD4ENSDSTL1SUB3000 |
|  | 170 | **RHD4-02-002-STL1-B07-Pumps** |  | 2027-03-29 | 2027-04-01 |  |
| RHD4CSTL1B07D151027 |  | Constant Speed Submersible pump Installation - 20 lps - (B7. 22 14 29.16.03)-STL1-B07-D15 | 4d | 2027-03-29 | 2027-04-01 | RHD4CSTL1B07D151026, RHD4PRLOLSTAGLFS1100, RHD4ENSTL1APPMEC1200, RHD4GNPPSD1100, RHD4ENSDZ6SUBRD220, RHD4ENSDSTL1SUB3000 |
|  | 171 | **RHD4-02-002-STL1-B07-Gate Valves** |  | 2027-01-24 | 2027-01-30 |  |
| RHD4CSTL1B07D151029 |  | Manually operated Gate Valve DN150 for - (B7.22 05 23.03)-STL1-B07-D15 | 6d | 2027-01-24 | 2027-01-30 | RHD4PRSHLDOSLFS1800, RHD4PRSHLSTAGLFS1800, RHD4CSTL1B07D021012, RHD4ENSTL1APPMEC1200, RHD4GNPPSD1100, RHD4ENSDZ6SUBRD220, RHD4ENSDSTL1SUB3000 |

| ID | WBS | Task | Duration | Start | Finish | Predecessors |
| --- | --- | --- | --- | --- | --- | --- |
|  | 172 | **RHD4-02-002-STL1-B07-Non-Return Valve** |  | 2027-01-31 | 2027-02-06 |  |
| RHD4CSTL1B07D151030 |  | Check Valve with diameter 150mm. 150mm - (B7.22 05 24.03)-STL1-B07-D15 | 6d | 2027-01-31 | 2027-02-06 | RHD4CSTL1B07D151029, RHD4PRSHLDOSLFS1800, RHD4PRSHLSTAGLFS1800, RHD4ENSTL1APPMEC1200, RHD4GNPPSD1100, RHD4ENSDZ6SUBRD220, RHD4ENSDSTL1SUB3000 |
|  | 173 | **RHD4-02-002-STL1-Pump Lifting System** |  | 2027-02-07 | 2027-02-27 |  |
|  | 174 | **RHD4-02-002-STL1-Ductile Pipes & Fittings** |  | 2027-02-07 | 2027-02-20 |  |
| RHD4CSTL1B07D151031 |  | Buried ductile iron pipes with diameter 150 mm - (B7.22 11 13.07)-STL1-B07-D15 | 6d | 2027-02-07 | 2027-02-13 | RHD4CSTL1B07D151030, RHD4PRSHLDOSLFS1700, RHD4PRSHLSTAGLFS1700 |
| RHD4CSTL1B07D151032 |  | Double flanged ductile iron pipe with diameter 150 mm - (B7.22 11 13.08)-STL1-B07-D15 | 6d | 2027-02-14 | 2027-02-20 | RHD4CSTL1B07D151031 |
|  | 175 | **RHD4-02-002-STL1-JIB Crane** |  | 2027-02-21 | 2027-02-27 |  |
| RHD4CSTL1B07D151033 |  | Install JIB Crane For storm and sewer pumping Stations - (B7.41 22 10.01)-STL1-B07-D15 | 5d | 2027-02-21 | 2027-02-27 | RHD4CSTL1B07D151032, RHD4PRLOLSTAGLFS1500 |
|  | 176 | **RHD4-02-002-Storm Lift Station 01-Electrical Room** |  | 2026-12-12 | 2027-10-03 |  |
|  | 177 | **RHD4-02-002-STL1-Sub Structure** |  | 2026-12-12 | 2027-06-03 |  |
|  | 178 | **RHD4-02-002-STL1-Plain Concrete** |  | 2026-12-12 | 2027-01-18 |  |
| RHD4CSTL1B07D031034 |  | Shuttering Plain Concrete - (B7.03 00 00 .01)-STL1-B07-D03 | 22d | 2026-12-12 | 2027-01-05 | RHD4CSTL1B07D021001 |
| RHD4CSTL1B07D031035 |  | Lean Concrete Plain Concrete - (B7.03 00 00 .01)-STL1-B07-D03 | 3d | 2027-01-06 | 2027-01-09 | RHD4CSTL1B07D031034 |
| RHD4CSTL1B07D031036 |  | Water proofing membrance Plain Concrete - (B7.07 13 13.01)-STL1-B07-D03 | 5d | 2027-01-10 | 2027-01-14 | RHD4CSTL1B07D031035, RHD4PRSHLDOSLFS1200, RHD4PRSHLSTAGLFS1200 |
| RHD4CSTL1B07D031037 |  | Screeding Plain Concrete - (B7.03 00 00 .04)-STL1-B07-D03 | 3d | 2027-01-16 | 2027-01-18 | RHD4CSTL1B07D031036 |
|  | 179 | **RHD4-02-002-STL1-Footing / Foundation** |  | 2027-01-19 | 2027-02-01 |  |
| RHD4CSTL1B07D031038 |  | Shuttering Foundation - (B7.03 00 00 .05)-STL1-B07-D03 | 3d | 2027-01-19 | 2027-01-21 | RHD4CSTL1B07D031037, RHD4ENSTL1APPSTC1000 |
| RHD4CSTL1B07D031039 |  | Steel Fixing Foundation - (B7.03 00 00 .05)-STL1-B07-D03 | 4d | 2027-01-23 | 2027-01-26 | RHD4CSTL1B07D031038, RHD4ENSTL1APPSTC1000 |
| RHD4CSTL1B07D031040 |  | RC Casting Foundation - (B7.03 00 00 .05)-STL1-B07-D03 | 3d | 2027-01-27 | 2027-01-30 | RHD4CSTL1B07D031039, RHD4ENSTL1APPSTC1000 |
| RHD4CSTL1B07D031041 |  | Deshuttering Foundation - (B7.03 00 00 .05)-STL1-B07-D03 | 2d | 2027-01-31 | 2027-02-01 | RHD4CSTL1B07D031040 |
|  | 180 | **RHD4-02-002-STL1-Neck Columns** |  | 2027-02-02 | 2027-02-20 |  |
| RHD4CSTL1B07D031042 |  | Steel Fixing Neck Columns - (B7.03 00 00 .06)-STL1-B07-D03 | 4d | 2027-02-02 | 2027-02-06 | RHD4CSTL1B07D031041, RHD4ENSTL1APPSTC1000 |
| RHD4CSTL1B07D031043 |  | Shuttering Neck Columns - (B7.03 00 00 .06)-STL1-B07-D03 | 3d | 2027-02-07 | 2027-02-09 | RHD4CSTL1B07D031042, RHD4ENSTL1APPSTC1000 |
| RHD4CSTL1B07D031044 |  | RC Casting Neck Columns - (B7.03 00 00 .06)-STL1-B07-D03 | 4d | 2027-02-10 | 2027-02-14 | RHD4CSTL1B07D031043, RHD4ENSTL1APPSTC1000 |
| RHD4CSTL1B07D031045 |  | Deshuttering Neck Columns - (B7.03 00 00 .06)-STL1-B07-D03 | 5d | 2027-02-15 | 2027-02-20 | RHD4CSTL1B07D031044 |
|  | 181 | **RHD4-02-002-STL1-Ground Beams** |  | 2027-02-21 | 2027-03-13 |  |
| RHD4CSTL1B07D031046 |  | Steel Fixing Ground Beams - (B7.03 00 00 .08)-STL1-B07-D03 | 5d | 2027-02-21 | 2027-02-27 | RHD4CSTL1B07D031045, RHD4ENSTL1APPSTC1000 |
| RHD4CSTL1B07D031047 |  | Shuttering Ground Beams - (B7.03 00 00 .08)-STL1-B07-D03 | 4d | 2027-02-28 | 2027-03-03 | RHD4CSTL1B07D031046, RHD4ENSTL1APPSTC1000 |
| RHD4CSTL1B07D031048 |  | RC Casting Ground Beams - (B7.03 00 00 .08)-STL1-B07-D03 | 2d | 2027-03-04 | 2027-03-06 | RHD4CSTL1B07D031047, RHD4ENSTL1APPSTC1000, RHD4CSTL1B07D151033 |
| RHD4CSTL1B07D031049 |  | Deshuttering Ground Beams - (B7.03 00 00 .08)-STL1-B07-D03 | 3d | 2027-03-07 | 2027-03-13 | RHD4CSTL1B07D031048 |
|  | 182 | **RHD4-02-002-STL1-Aggregate base Course** |  | 2027-03-14 | 2027-03-21 |  |
| RHD4CSTL1B07D031050 |  | Laying Aggregate base course Slab on Grade - (B7.32 11 23.01)-STL1-B07-D03 | 5d | 2027-03-14 | 2027-03-18 | RHD4CSTL1B07D031049, RHD4ENSTL1APPSTC1000 |
| RHD4CSTL1B07D031051 |  | Compaction of aggregate base course Slab on Grade - (B7.32 11 23.01)-STL1-B07-D03 | 2d | 2027-03-20 | 2027-03-21 | RHD4CSTL1B07D031050, RHD4ENSTL1APPSTC1000 |
|  | 183 | **RHD4-02-002-STL1-Slab on Grade** |  | 2027-03-22 | 2027-04-10 |  |
| RHD4CSTL1B07D031052 |  | Screeding for SOG works Slab on Grade - (B7.03 00 00 .02)-STL1-B07-D03 | 4d | 2027-03-22 | 2027-03-25 | RHD4CSTL1B07D031051, RHD4ENSTL1APPSTC1000 |
| RHD4CSTL1B07D031053 |  | Shuttering Slab on Grade - (B7.03 00 00 .09)-STL1-B07-D03 | 5d | 2027-03-27 | 2027-03-31 | RHD4CSTL1B07D031052, RHD4ENSTL1APPSTC1000 |
| RHD4CSTL1B07D031054 |  | Steel Fixing Slab on Grade - (B7.03 00 00 .09)-STL1-B07-D03 | 3d | 2027-04-01 | 2027-04-04 | RHD4CSTL1B07D031053, RHD4ENSTL1APPSTC1000 |
| RHD4CSTL1B07D031055 |  | RC Casting Slab on Grade - (B7.03 00 00 .09)-STL1-B07-D03 | 3d | 2027-04-05 | 2027-04-07 | RHD4CSTL1B07D031054, RHD4ENSTL1APPSTC1000 |
| RHD4CSTL1B07D031056 |  | Deshuttering Slab on Grade - (B7.03 00 00 .09)-STL1-B07-D03 | 2d | 2027-04-08 | 2027-04-10 | RHD4CSTL1B07D031055, RHD4CSTL1B07D151027 |
|  | 184 | **RHD4-02-002-STL1-Waterproofing** |  | 2027-04-11 | 2027-04-18 |  |
| RHD4CSTL1B07D071057 |  | 2 coats of bitumen on footings Slab on Grade - (B7.07 14 00.01)-STL1-B07-D07 | 3d | 2027-04-11 | 2027-04-13 | RHD4CSTL1B07D031056, RHD4PRSHLDOSLFS1200, RHD4PRSHLSTAGLFS1200 |
| RHD4CSTL1B07D071058 |  | 2 coats of bitumen on Grade Beams and SOW Slab on Grade - (B7.07 14 00.01)-STL1-B07-D07 | 4d | 2027-04-14 | 2027-04-18 | RHD4CSTL1B07D071057, RHD4PRSHLDOSLFS1200, RHD4PRSHLSTAGLFS1200 |
|  | 185 | **RHD4-02-002-STL1-Vapor Retarders** |  | 2027-04-19 | 2027-04-22 |  |
| RHD4CSTL1B07D071059 |  | 250 micron Polyethylene sheet Slab on Grade - (B7.07 26 16.01)-STL1-B07-D07 | 4d | 2027-04-19 | 2027-04-22 | RHD4CSTL1B07D071058, RHD4PRSHLDOSLFS1200, RHD4PRSHLSTAGLFS1200 |
|  | 186 | **RHD4-02-002-STL1-Columns** |  | 2027-04-24 | 2027-05-05 |  |
| RHD4CSTL1B07D031060 |  | Shuttering Columns - (B7.03 00 00 .13)-STL1-B07-D03 | 2d | 2027-04-24 | 2027-04-25 | RHD4CSTL1B07D071059, RHD4ENSTL1APPSTC1000 |
| RHD4CSTL1B07D031061 |  | Steel Fixing Columns - (B7.03 00 00 .13)-STL1-B07-D03 | 4d | 2027-04-26 | 2027-04-29 | RHD4CSTL1B07D031060, RHD4ENSTL1APPSTC1000 |
| RHD4CSTL1B07D031062 |  | RC Casting Columns - (B7.03 00 00 .13)-STL1-B07-D03 | 2d | 2027-05-01 | 2027-05-02 | RHD4CSTL1B07D031061, RHD4ENSTL1APPSTC1000 |
| RHD4CSTL1B07D031063 |  | Deshuttering Columns - (B7.03 00 00 .13)-STL1-B07-D03 | 3d | 2027-05-03 | 2027-05-05 | RHD4CSTL1B07D031062 |
|  | 187 | **RHD4-02-002-STL1-Slab Beams** |  | 2027-05-06 | 2027-05-23 |  |
| RHD4CSTL1B07D031064 |  | Shuttering Roof Slab - (B7.03 00 00 .14)-STL1-B07-D03 | 4d | 2027-05-06 | 2027-05-10 | RHD4CSTL1B07D031063, RHD4ENSTL1APPSTC1000 |
| RHD4CSTL1B07D031065 |  | Steel Fixing Roof Slab - (B7.03 00 00 .14)-STL1-B07-D03 | 3d | 2027-05-11 | 2027-05-13 | RHD4CSTL1B07D031064, RHD4ENSTL1APPSTC1000 |
| RHD4CSTL1B07D031066 |  | RC Casting Roof Slab - (B7.03 00 00 .14)-STL1-B07-D03 | 2d | 2027-05-19 | 2027-05-20 | RHD4CSTL1B07D031065, RHD4ENSTL1APPSTC1000 |
| RHD4CSTL1B07D031067 |  | Deshuttering Roof Slab - (B7.03 00 00 .14)-STL1-B07-D03 | 2d | 2027-05-22 | 2027-05-23 | RHD4CSTL1B07D031066 |
|  | 188 | **RHD4-02-002-STL1-Roof Slab** |  | 2027-05-24 | 2027-06-03 |  |
| RHD4CSTL1B07D031068 |  | Shuttering Roof Slab - (B7.03 00 00 .15)-STL1-B07-D03 | 3d | 2027-05-24 | 2027-05-26 | RHD4CSTL1B07D031067, RHD4ENSTL1APPSTC1000 |
| RHD4CSTL1B07D031069 |  | Steel Fixing Roof Slab - (B7.03 00 00 .15)-STL1-B07-D03 | 3d | 2027-05-27 | 2027-05-30 | RHD4CSTL1B07D031068, RHD4ENSTL1APPSTC1000 |
| RHD4CSTL1B07D031070 |  | RC Casting Roof Slab - (B7.03 00 00 .15)-STL1-B07-D03 | 2d | 2027-05-31 | 2027-06-01 | RHD4CSTL1B07D031069, RHD4ENSTL1APPSTC1000 |
| RHD4CSTL1B07D031071 |  | Deshuttering Roof Slab - (B7.03 00 00 .15)-STL1-B07-D03 | 2d | 2027-06-02 | 2027-06-03 | RHD4CSTL1B07D031070 |
|  | 189 | **RHD4-02-002-STL1-Electrical Room-Finishes** |  | 2027-06-05 | 2027-07-17 |  |
|  | 190 | **RHD4-02-002-STL1-Masonary** |  | 2027-06-05 | 2027-06-07 |  |
| RHD4CSTL1B07D091072 |  | Masonary Block work (CMU walls) Insulated Block Work - (B7.04 22 00.01)-STL1-B07-D09 | 3d | 2027-06-05 | 2027-06-07 | RHD4CSTL1B07D031071, RHD4CSTL1B07D151033, RHD4ENSTL1APPARC1100, RHD4GNPPSD1100, RHD4ENSDZ6SUBRD220, RHD4ENSDSTL1SUB2000 |
|  | 191 | **RHD4-02-002-STL1-Roofs waterproofing system** |  | 2027-06-08 | 2027-06-23 |  |
| RHD4CSTL1B07D071073 |  | 250 micron Polyethylene sheet - (B7.07 00 00.06)-STL1-B07-D07 | 2d | 2027-06-08 | 2027-06-09 | RHD4CSTL1B07D091072, RHD4PRSHLDOSLFS1200, RHD4PRSHLDOSLFS1100, RHD4PRSHLSTAGLFS1200, RHD4PRSHLSTAGLFS1100, RHD4ENSTL1APPARC1100, RHD4GNPPSD1100, RHD4ENSDZ6SUBRD220, RHD4ENSDSTL1SUB2000 |
| RHD4CSTL1B07D071074 |  | 50 mm thick minimum Foam Concrete - (B7.07 00 00.05)-STL1-B07-D07 | 3d | 2027-06-10 | 2027-06-13 | RHD4CSTL1B07D071073, RHD4PRSHLDOSLFS1100, RHD4PRSHLSTAGLFS1100, RHD4ENSTL1APPARC1100, RHD4GNPPSD1100, RHD4ENSDZ6SUBRD220, RHD4ENSDSTL1SUB2000 |
| RHD4CSTL1B07D071075 |  | 30 mm thick Screed Concrete - (B7.07 00 00.04)-STL1-B07-D07 | 3d | 2027-06-10 | 2027-06-13 | RHD4CSTL1B07D071074 SS, RHD4PRSHLDOSLFS1100, RHD4PRSHLSTAGLFS1100, RHD4ENSTL1APPARC1100, RHD4GNPPSD1100, RHD4ENSDZ6SUBRD220, RHD4ENSDSTL1SUB2000 |
| RHD4CSTL1B07D071076 |  | 4 mm thick Waterproofing Bituminous Membrane - (B7.07 00 00.03)-STL1-B07-D07 | 2d | 2027-06-14 | 2027-06-15 | RHD4CSTL1B07D071075, RHD4PRSHLDOSLFS1200, RHD4PRSHLDOSLFS1100, RHD4PRSHLSTAGLFS1200, RHD4PRSHLSTAGLFS1100, RHD4ENSTL1APPARC1100, RHD4GNPPSD1100, RHD4ENSDZ6SUBRD220, RHD4ENSDSTL1SUB2000 |
| RHD4CSTL1B07D071077 |  | Geotextile Membrane - (B7.07 00 00.02)-STL1-B07-D07 | 4d | 2027-06-16 | 2027-06-20 | RHD4CSTL1B07D071076, RHD4PRSHLDOSLFS1100, RHD4PRSHLSTAGLFS1100, RHD4CSTL1B07D071074, RHD4ENSTL1APPARC1100, RHD4GNPPSD1100, RHD4ENSDZ6SUBRD220, RHD4ENSDSTL1SUB2000 |
| RHD4CSTL1B07D071078 |  | 50 mm thick Gravel Toppings - (B7.07 00 00.01)-STL1-B07-D07 | 3d | 2027-06-21 | 2027-06-23 | RHD4CSTL1B07D071077, RHD4PRSHLDOSLFS1100, RHD4PRSHLSTAGLFS1100, RHD4ENSTL1APPARC1100, RHD4GNPPSD1100, RHD4ENSDZ6SUBRD220, RHD4ENSDSTL1SUB2000 |
|  | 192 | **RHD4-02-002-STL1-Stone Copings** |  | 2027-06-24 | 2027-06-26 |  |

| ID | WBS | Task | Duration | Start | Finish | Predecessors |
| --- | --- | --- | --- | --- | --- | --- |
| RHD4CSTL1B07D091079 |  | Supply and install Stone coping 40mm thickness Insulated Block Work - (B7.07 71 13.01)-STL1-B07-D09 | 2d | 2027-06-24 | 2027-06-26 | RHD4CSTL1B07D071078, RHD4ENSTL1APPARC1100, RHD4GNPPSD1100, RHD4ENSDZ6SUBRD220, RHD4ENSDSTL1SUB2000 |
|  | 193 | **RHD4-02-002-STL1-Doors & Windows** |  |  |  |  |
|  | 194 | **RHD4-02-002-STL1-Cement Plastering** |  | 2027-06-27 | 2027-06-30 |  |
| RHD4CSTL1B07D091081 |  | Internal Plastering For Walls 15mm - (B7.09 24 00.01)-STL1-B07-D09 | 4d | 2027-06-27 | 2027-06-30 | RHD4CSTL1B07D091079, RHD4ENSTL1APPARC1100, RHD4GNPPSD1100, RHD4ENSDZ6SUBRD220, RHD4ENSDSTL1SUB2000 |
| RHD4CSTL1B07D091082 |  | External Plastering for walls 20mm - (B7.09 24 00.02)-STL1-B07-D09 | 3d | 2027-06-27 | 2027-06-29 | RHD4CSTL1B07D091081 SS, RHD4ENSTL1APPARC1100, RHD4GNPPSD1100, RHD4ENSDZ6SUBRD220, RHD4ENSDSTL1SUB2000 |
|  | 195 | **RHD4-02-002-STL1-Metal Ladders** |  | 2027-06-30 | 2027-07-05 |  |
| RHD4CSTL1B07D051085 |  | With cage, Length 3.6m - (B7.05 51 33.10)-STL1-B07-D05 | 5d | 2027-06-30 | 2027-07-05 | RHD4CSTL1B07D091082, RHD4PRSHLDOSLFS1000, RHD4PRSHLSTAGLFS1000, RHD4ENSTL1APPARC1100, RHD4GNPPSD1100, RHD4ENSDZ6SUBRD220, RHD4ENSDSTL1SUB2000 |
|  | 196 | **RHD4-02-002-STL1-Painting** |  | 2027-07-06 | 2027-07-11 |  |
| RHD4CSTL1B07D091087 |  | Internal Acrylic Paint For Walls Acrylic Paint - (B7.09 91 00.01)-STL1-B07-D09 | 5d | 2027-07-06 | 2027-07-11 | RHD4PRSHLDOSLFS1500, RHD4PRSHLSTAGLFS1500, RHD4CSTL1B07D051085, RHD4ENSTL1APPARC1100, RHD4GNPPSD1100, RHD4ENSDZ6SUBRD220, RHD4ENSDSTL1SUB2000 |
| RHD4CSTL1B07D091088 |  | External Acrylic Paint for walls Acrylic Paint - (B7.09 91 00.02)-STL1-B07-D09 | 5d | 2027-07-06 | 2027-07-11 | RHD4CSTL1B07D091087 SS, RHD4PRSHLDOSLFS1500, RHD4PRSHLSTAGLFS1500, RHD4ENSTL1APPARC1100, RHD4GNPPSD1100, RHD4ENSDZ6SUBRD220, RHD4ENSDSTL1SUB2000 |
|  | 197 | **RHD4-02-002-STL1-Epoxy Coating** |  | 2027-07-12 | 2027-07-17 |  |
| RHD4CSTL1B07D091090 |  | Internal Acrylic Paint For Walls Acrylic Paint - (B7.09 96 56.01)-STL1-B07-D09 | 5d | 2027-07-12 | 2027-07-17 | RHD4PRSHLDOSLFS1500, RHD4PRSHLSTAGLFS1500, RHD4CSTL1B07D091088, RHD4ENSTL1APPARC1100, RHD4GNPPSD1100, RHD4ENSDZ6SUBRD220, RHD4ENSDSTL1SUB2000 |
|  | 198 | **RHD4-02-002-STL1-Mechanical Works** |  | 2027-06-02 | 2027-07-29 |  |
|  | 199 | **RHD4-02-002-STL1-Wall mounted Split/AC** |  | 2027-06-02 | 2027-06-23 |  |
| RHD4CSTL1B07D151091 |  | Wall mounted Split Air Conditioning Unit. FCU-01 Installation 3.6 kw - (B7.23 81 26.01)-STL1-B07-D15 | 10d | 2027-06-02 | 2027-06-13 | RHD4CSTL1B07D031071 SS, RHD4PRSHLDOSLFS2200, RHD4PRSHLSTAGLFS2200, RHD4ENSTL1APPMEC1200, RHD4GNPPSD1100, RHD4ENSDZ6SUBRD220, RHD4ENSDSTL1SUB3000 |
| RHD4CSTL1B07D151092 |  | Wall mounted Split Air Conditioning Unit. FCU-01 Installation 3.6 kw - (B7.23 81 26.01)-STL1-B07-D15 | 9d | 2027-06-14 | 2027-06-23 | RHD4CSTL1B07D151091, RHD4PRSHLDOSLFS2200, RHD4PRSHLSTAGLFS2200, RHD4ENSTL1APPMEC1200, RHD4GNPPSD1100, RHD4ENSDZ6SUBRD220, RHD4ENSDSTL1SUB3000 |
|  | 200 | **RHD4-02-002-STL1-Portable Fire Extinguishers** |  | 2027-06-24 | 2027-07-13 |  |
| RHD4CSTL1B07D151093 |  | Powder fire extinguishers installation - (B7.21 20 00.01)-STL1-B07-D15 | 8d | 2027-06-24 | 2027-07-03 | RHD4CSTL1B07D151092, RHD4ENSTL1APPMEC1200, RHD4GNPPSD1100, RHD4ENSDZ6SUBRD220, RHD4ENSDSTL1SUB3000 |
| RHD4CSTL1B07D151094 |  | CO2 fire extinguishers installation - (B7.21 20 00.02)-STL1-B07-D15 | 9d | 2027-07-04 | 2027-07-13 | RHD4CSTL1B07D151093, RHD4ENSTL1APPMEC1200, RHD4GNPPSD1100, RHD4ENSDZ6SUBRD220, RHD4ENSDSTL1SUB3000 |
|  | 201 | **RHD4-02-002-STL1-Scupper** |  | 2027-07-14 | 2027-07-21 |  |
| RHD4CSTL1B07D151095 |  | Scupper with diameter 110mm - Installation - (B7.22 13 19.13.01)-STL1-B07-D15 | 7d | 2027-07-14 | 2027-07-21 | RHD4CSTL1B07D151094, RHD4ENSTL1APPMEC1200, RHD4GNPPSD1100, RHD4ENSDZ6SUBRD220, RHD4ENSDSTL1SUB3000 |
|  | 202 | **RHD4-02-002-STL1-Pipes, Fittings & Appurtenances** |  | 2027-07-22 | 2027-07-29 |  |
| RHD4CSTL1B07D151096 |  | uPVC pipes with diameter 25mm. Roof Slab - (B7.22 13 16.02)-STL1-B07-D15 | 7d | 2027-07-22 | 2027-07-29 | RHD4CSTL1B07D151095, RHD4PRSHLDOSLFS2100, RHD4PRSHLSTAGLFS2100, RHD4ENSTL1APPMEC1200, RHD4GNPPSD1100, RHD4ENSDZ6SUBRD220, RHD4ENSDSTL1SUB3000 |
|  | 203 | **RHD4-02-002-STL1-Electrical Works** |  | 2027-06-05 | 2027-10-03 |  |
|  | 204 | **RHD4-02-002-STL1-4Cx 6mm2 + 1Cx6mm2 Cu/XLPE/PVC** |  | 2027-06-05 | 2027-06-19 |  |
| RHD4CSTL1B07D161097 |  | Electrical Conduits and Pull Box Installation for LV Cables 4Cx mm²- (B7.26 05 19.03)-STL1-B07-D16 | 2d | 2027-06-05 | 2027-06-06 | RHD4CSTL1B07D091072 SS, RHD4ENSTL1APPELE1300 |
| RHD4CSTL1B07D161098 |  | Cable Tray Installation for LV Cables 4Cx mm²- (B7.26 05 19.03)-STL1-B07-D16 | 3d | 2027-06-07 | 2027-06-09 | RHD4CSTL1B07D161097, RHD4ENSTL1APPELE1300 |
| RHD4CSTL1B07D161099 |  | LV Cable Pulling for LV Cables 4Cx mm²- (B7.26 05 19.03)-STL1-B07-D16 | 4d | 2027-06-10 | 2027-06-14 | RHD4CSTL1B07D161098, RHD4PRSHLDOSLFS2600, RHD4PRSHLSTAGLFS2600 |
| RHD4CSTL1B07D161100 |  | LV Cable Termination for LV Cables 4Cx mm²- (B7.26 05 19.03)-STL1-B07-D16 | 4d | 2027-06-15 | 2027-06-19 | RHD4CSTL1B07D161099 |
|  | 205 | **RHD4-02-002-STL1-4Cx 95mm2 + 1Cx50mm2 Cu/XLPE/PVC** |  | 2027-06-15 | 2027-07-03 |  |
| RHD4CSTL1B07D161101 |  | Electrical Conduits and Pull Box Installation for LV Cables 4Cx95 mm²- (B7.26 05 19.05)-STL1-B07-D16 | 5d | 2027-06-15 | 2027-06-20 | RHD4CSTL1B07D161100 SS, RHD4ENSTL1APPELE1300 |
| RHD4CSTL1B07D161102 |  | Cable Tray Installation for LV Cables 4Cx95 mm²- (B7.26 05 19.05)-STL1-B07-D16 | 4d | 2027-06-21 | 2027-06-24 | RHD4CSTL1B07D161101, RHD4ENSTL1APPELE1300 |
| RHD4CSTL1B07D161103 |  | LV Cable Pulling for LV Cables 4Cx95 mm²- (B7.26 05 19.05)-STL1-B07-D16 | 3d | 2027-06-26 | 2027-06-28 | RHD4CSTL1B07D161102, RHD4PRSHLDOSLFS2600, RHD4PRSHLSTAGLFS2600 |
| RHD4CSTL1B07D161104 |  | LV Cable Termination for LV Cables 4Cx95 mm²- (B7.26 05 19.05)-STL1-B07-D16 | 4d | 2027-06-29 | 2027-07-03 | RHD4CSTL1B07D161103 |
|  | 206 | **RHD4-02-002-STL1-4Cx 50mm2 + 1Cx25mm2 CU/XLPE / SWA / PVC** |  | 2027-06-29 | 2027-07-15 |  |
| RHD4CSTL1B07D161105 |  | Electrical Conduits and Pull Box Installation for LV Cables 4Cx6 mm²- (B7.26 05 19.06)-STL1-B07-D16 | 5d | 2027-06-29 | 2027-07-04 | RHD4CSTL1B07D161104 SS, RHD4ENSTL1APPELE1300 |
| RHD4CSTL1B07D161106 |  | Cable Tray Installation for LV Cables 4Cx6 mm²- (B7.26 05 19.06)-STL1-B07-D16 | 3d | 2027-07-05 | 2027-07-07 | RHD4CSTL1B07D161105, RHD4ENSTL1APPELE1300 |
| RHD4CSTL1B07D161107 |  | LV Cable Pulling for LV Cables 4Cx6 mm²- (B7.26 05 19.06)-STL1-B07-D16 | 4d | 2027-07-08 | 2027-07-12 | RHD4CSTL1B07D161106, RHD4PRSHLDOSLFS2600, RHD4PRSHLSTAGLFS2600 |
| RHD4CSTL1B07D161108 |  | LV Cable Termination for LV Cables 4Cx6 mm²- (B7.26 05 19.06)-STL1-B07-D16 | 3d | 2027-07-13 | 2027-07-15 | RHD4CSTL1B07D161107 |
|  | 207 | **RHD4-02-002-STL1-4Cx 4mm2 + 1Cx4mm2 Cu/XLPE/PVC** |  | 2027-07-13 | 2027-07-28 |  |
| RHD4CSTL1B07D161109 |  | Electrical Conduits and Pull Box Installation for LV Cables 4Cx4 mm²- (B7.26 05 19.07)-STL1-B07-D16 | 3d | 2027-07-13 | 2027-07-15 | RHD4CSTL1B07D161108 SS, RHD4ENSTL1APPELE1300 |
| RHD4CSTL1B07D161110 |  | Cable Tray Installation for LV Cables 4Cx4 mm²- (B7.26 05 19.07)-STL1-B07-D16 | 4d | 2027-07-17 | 2027-07-20 | RHD4CSTL1B07D161109, RHD4ENSTL1APPELE1300 |
| RHD4CSTL1B07D161111 |  | LV Cable Pulling for LV Cables 4Cx4 mm²- (B7.26 05 19.07)-STL1-B07-D16 | 3d | 2027-07-21 | 2027-07-24 | RHD4CSTL1B07D161110, RHD4PRSHLDOSLFS2600, RHD4PRSHLSTAGLFS2600 |
| RHD4CSTL1B07D161112 |  | LV Cable Termination for LV Cables 4Cx4 mm²- (B7.26 05 19.07)-STL1-B07-D16 | 4d | 2027-07-25 | 2027-07-28 | RHD4CSTL1B07D161111 |
|  | 208 | **RHD4-02-002-STL1-Wiring Devices** |  | 2027-07-25 | 2027-08-05 |  |
| RHD4CSTL1B07D161113 |  | 13A Signle Socket Outlet WP for Wiring Devices - (B7.26 27 26 .01)-STL1-B07-D16 | 4d | 2027-07-25 | 2027-07-28 | RHD4CSTL1B07D161112 SS, RHD4ENSTL1APPELE1300, RHD4PRSHLDOSLFS2800, RHD4PRSHLSTAGLFS2800 |
| RHD4CSTL1B07D161114 |  | 13A Double Socket Outlet WP for Wiring Devices - (B7.26 27 26 .02)-STL1-B07-D16 | 3d | 2027-07-29 | 2027-08-01 | RHD4CSTL1B07D161113, RHD4ENSTL1APPELE1300, RHD4PRSHLDOSLFS2800, RHD4PRSHLSTAGLFS2800 |
| RHD4CSTL1B07D161115 |  | 25A Switch Socket Outlet (for Split Unit), WP for Wiring Devices - (B7.26 27 26 .03)-STL1-B07-D16 | 4d | 2027-08-02 | 2027-08-05 | RHD4CSTL1B07D161114, RHD4ENSTL1APPELE1300, RHD4PRSHLDOSLFS2800, RHD4PRSHLSTAGLFS2800 |
|  | 209 | **RHD4-02-002-STL1-Grounding and Bonding** |  | 2027-08-02 | 2027-08-21 |  |
| RHD4CSTL1B07D161116 |  | Copper Conductor Connecting to Steel Rebar Installation for Copper Rods - (B7.26 05 26.03)-STL1-B07-D16 | 4d | 2027-08-02 | 2027-08-05 | RHD4CSTL1B07D161115 SS, RHD4ENSTL1APPELE1300, RHD4PRSHLDOSLFS2500, RHD4PRSHLSTAGLFS2500 |
| RHD4CSTL1B07D161117 |  | Earth pits Installation for Copper Rods - (B7.26 05 26.03)-STL1-B07-D16 | 5d | 2027-08-07 | 2027-08-11 | RHD4CSTL1B07D161116, RHD4ENSTL1APPELE1300 |
| RHD4CSTL1B07D161118 |  | Earth Bars Installation for Copper Rods - (B7.26 05 26.03)-STL1-B07-D16 | 4d | 2027-08-12 | 2027-08-16 | RHD4CSTL1B07D161117, RHD4ENSTL1APPELE1300 |
| RHD4CSTL1B07D161119 |  | Copper Tape on Roof Installation for Copper Rods - (B7.26 05 26.03)-STL1-B07-D16 | 4d | 2027-08-17 | 2027-08-21 | RHD4CSTL1B07D161118, RHD4ENSTL1APPELE1300 |
|  | 210 | **RHD4-02-002-STL1-Indoor Lighting Fixtures** |  | 2027-08-17 | 2027-09-13 |  |
| RHD4CSTL1B07D161120 |  | Electrical Conduits and Pull Box Installation - 24.5 W for Lighting Fixtures - (B7.26 51 00.01)-STL1-B07-D16 | 5d | 2027-08-17 | 2027-08-22 | RHD4CSTL1B07D161119 SS, RHD4ENSTL1APPELE1300 |
| RHD4CSTL1B07D161121 |  | LV Cable Pulling for Lighting Fixtures - (B7.26 51 00.01)-STL1-B07-D16 | 4d | 2027-08-23 | 2027-08-26 | RHD4CSTL1B07D161120, RHD4ENSTL1APPELE1300 |
| RHD4CSTL1B07D161122 |  | Lighting Fixture Installation for Lighting Fixtures - (B7.26 51 00.01)-STL1-B07-D16 | 4d | 2027-08-28 | 2027-08-31 | RHD4CSTL1B07D161121, RHD4ENSTL1APPELE1300, RHD4PRSHLDOSLFS2700, RHD4PRSHLSTAGLFS2700 |
| RHD4CSTL1B07D161123 |  | Electrical Conduits and Pull Box Installation - 8 W for Lighting Fixtures - (B7.26 51 00.02)-STL1-B07-D16 | 3d | 2027-09-01 | 2027-09-04 | RHD4CSTL1B07D161122 |
| RHD4CSTL1B07D161124 |  | LV Cable Pulling for Lighting Fixtures - (B7.26 51 00.02)-STL1-B07-D16 | 3d | 2027-09-05 | 2027-09-07 | RHD4CSTL1B07D161123 |
| RHD4CSTL1B07D161125 |  | Lighting Fixture Installation for Lighting Fixtures - (B7.26 51 00.02)-STL1-B07-D16 | 5d | 2027-09-08 | 2027-09-13 | RHD4CSTL1B07D161124, RHD4PRSHLDOSLFS2700, RHD4PRSHLSTAGLFS2700 |
|  | 211 | **RHD4-02-002-STL1-Outdoor Lighting Fixtures** |  | 2027-07-25 | 2027-08-19 |  |
| RHD4CSTL1B07D161126 |  | Electrical Conduits and Pull Box Installation - 7 W for Lighting Fixtures - (B7.26 56 00.01)-STL1-B07-D16 | 2d | 2027-07-25 | 2027-07-26 | RHD4CSTL1B07D161112 SS, RHD4ENSTL1APPELE1300 |
| RHD4CSTL1B07D161127 |  | LV Cable Pulling for Lighting Fixtures - (B7.26 56 00.01)-STL1-B07-D16 | 3d | 2027-07-27 | 2027-07-29 | RHD4CSTL1B07D161126, RHD4ENSTL1APPELE1300 |
| RHD4CSTL1B07D161128 |  | Lighting Fixture Installation for Lighting Fixtures - (B7.26 56 00.01)-STL1-B07-D16 | 4d | 2027-07-31 | 2027-08-03 | RHD4CSTL1B07D161127, RHD4ENSTL1APPELE1300, RHD4PRSHLDOSLFS2700, RHD4PRSHLSTAGLFS2700 |
| RHD4CSTL1B07D161129 |  | Electrical Conduits and Pull Box Installation - 42.5 W for Lighting Fixtures - (B7.26 56 00.02)-STL1-B07-D16 | 4d | 2027-08-04 | 2027-08-08 | RHD4CSTL1B07D161128, RHD4ENSTL1APPELE1300 |
| RHD4CSTL1B07D161130 |  | LV Cable Pulling for Lighting Fixtures - (B7.26 56 00.02)-STL1-B07-D16 | 5d | 2027-08-09 | 2027-08-14 | RHD4CSTL1B07D161129 |
| RHD4CSTL1B07D161131 |  | Lighting Fixture Installation for Lighting Fixtures - (B7.26 56 00.02)-STL1-B07-D16 | 5d | 2027-08-15 | 2027-08-19 | RHD4CSTL1B07D161130, RHD4PRSHLDOSLFS2700, RHD4PRSHLSTAGLFS2700 |
|  | 212 | **RHD4-02-002-STL1- Enclosed Switches and Circuit Breakers** |  | 2027-08-15 | 2027-08-28 |  |
| RHD4CSTL1B07D161132 |  | 25-amp single-pole disconnect switches for Lighting Fixtures - (B7.26 28 16.01)-STL1-B07-D16 | 6d | 2027-08-15 | 2027-08-21 | RHD4CSTL1B07D161131 SS, RHD4ENSTL1APPELE1300, RHD4PRSHLDOSLFS2900, RHD4PRSHLSTAGLFS2900 |
| RHD4CSTL1B07D161133 |  | 25-amp three-pole disconnect switches for Lighting Fixtures - (B7.26 28 16.02)-STL1-B07-D16 | 6d | 2027-08-22 | 2027-08-28 | RHD4CSTL1B07D161132, RHD4ENSTL1APPELE1300, RHD4PRSHLDOSLFS2900, RHD4PRSHLSTAGLFS2900 |

| ID | WBS | Task | Duration | Start | Finish | Predecessors |
| --- | --- | --- | --- | --- | --- | --- |
|  | 213 | **RHD4-02-002-STL1-Secondery Panel Boards** |  | 2027-08-22 | 2027-09-02 |  |
| RHD4CSTL1B07D161136 |  | Panel "LPP-UT5" Installation for Panelboards - (B7.26 24 16.06)-STL1-B07-D16 | 5d | 2027-08-22 | 2027-08-26 | RHD4ENSTL1APPELE1300, RHD4PRSHLDOSLFS2400, RHD4PRSHLSTAGLFS2400, RHD4CSTL1B07D161133 SS |
| RHD4CSTL1B07D161137 |  | Panel "DB-UT5" Termination for Panelboards - (B7.26 24 16.06)-STL1-B07-D16 | 6d | 2027-08-28 | 2027-09-02 | RHD4CSTL1B07D161136, RHD4ENSTL1APPELE1300 |
|  | 214 | **RHD4-02-002-STL1-Addressable Fire-Alarm System** |  | 2027-08-17 | 2027-09-15 |  |
| RHD4CSTL1B07D161138 |  | 2 loop FACP with charger, battries and auto dialer for Fire Alarm - (B7.28 46 00.02)-STL1-B07-D16 | 4d | 2027-08-17 | 2027-08-21 | RHD4CSTL1B07D161119 SS, RHD4ENSTL1APPELE1300, RHD4PRSHLDOSLFS3000, RHD4PRSHLSTAGLFS3000 |
| RHD4CSTL1B07D161139 |  | Addressable type fire alarm Photoelectric smoke detector complete base for Fire Alarm - (B7.28 46 00.04)-STL1-B07-D16 | 4d | 2027-08-22 | 2027-08-25 | RHD4CSTL1B07D161138 |
| RHD4CSTL1B07D161140 |  | Addressable type fire alarm manual call station/pull station for Fire Alarm - (B7.28 46 00.05)-STL1-B07-D16 | 4d | 2027-08-26 | 2027-08-30 | RHD4CSTL1B07D161139 |
| RHD4CSTL1B07D161141 |  | Addressable type fire alarm manual call station/pull station for Fire Alarm - (B7.28 46 00.06)-STL1-B07-D16 | 2d | 2027-08-31 | 2027-09-01 | RHD4CSTL1B07D161140 |
| RHD4CSTL1B07D161142 |  | Conventional 24V DC fire alarm wall mounted 15cd flasher/strobe. for Fire Alarm - (B7.28 46 00.07)-STL1-B07-D16 | 3d | 2027-09-02 | 2027-09-05 | RHD4CSTL1B07D161141 |
| RHD4CSTL1B07D161143 |  | Conventional 24V DC fire alarm wall mounted 15cd weather proof for Fire Alarm - (B7.28 46 00.08)-STL1-B07-D16 | 3d | 2027-09-06 | 2027-09-08 | RHD4CSTL1B07D161142, RHD4CSTL1B07D161137 |
| RHD4CSTL1B07D161144 |  | Short CCT Isolator. for Fire Alarm - (B7.28 46 00.09)-STRM1-B07-D16 | 2d | 2027-09-09 | 2027-09-11 | RHD4CSTL1B07D161143 |
| RHD4CSTL1B07D161145 |  | Addressable Control module. for Fire Alarm - (B7.28 46 00.10)-STL1-B07-D16 | 4d | 2027-09-12 | 2027-09-15 | RHD4CSTL1B07D161144 |
|  | 215 | **RHD4-02-002-STL1-Main Motor Control Center (MCC)** |  | 2027-08-22 | 2027-09-02 |  |
| RHD4CSTL1B07D161151 |  | Installation for MCC-8 - (B7.26 29 00.03)-STL1-B07-D16 | 6d | 2027-08-22 | 2027-08-28 | RHD4CSTL1B07D161133 SS, RHD4ENSTL1APPELE1300, RHD4PRSHLDOSLFS2300, RHD4PRSHLSTAGLFS2300 |
| RHD4CSTL1B07D161152 |  | Termination for MCC-8 - (B7.26 29 00.03)-STL1-B07-D16 | 5d | 2027-08-29 | 2027-09-02 | RHD4CSTL1B07D161151, RHD4ENSTL1APPELE1300 |
|  | 216 | **RHD4-02-002-STL1-Programmable Logic Controllers** |  | 2027-09-14 | 2027-10-03 |  |
| RHD4CSTL1B07D161153 |  | PLC System Installation for - (B7.40 63 43.01)-STL1-B07-D16 | 6d | 2027-09-14 | 2027-09-20 | RHD4CSTL1B07D161152, RHD4CSTL1B07D161125, RHD4ENSTL1APPELE1300, RHD4CZ2C082RD7100, RHD4PRLOLSTAGLFS1700 |
| RHD4CSTL1B07D161154 |  | Process Control Wiring Installation for - (B7.40 67 10.01)-STL1-B07-D16 | 5d | 2027-09-21 | 2027-09-27 | RHD4CSTL1B07D161153, RHD4ENSTL1APPELE1300, RHD4CSTL1B07D161145, RHD4PRLOLSTAGLFS1700 |
| RHD4CSTL1B07D161155 |  | Instrumentation for Process Systems for - (B7.40 70 00.01)-STL1-B07-D16 | 5d | 2027-09-28 | 2027-10-03 | RHD4CSTL1B07D161154, RHD4ENSTL1APPELE1300, RHD4PRLOLSTAGLFS1700 |
|  | 217 | **RHD4-02-002-Storm Lift Station 01-Site Works** |  | 2027-07-31 | 2027-10-21 |  |
|  | 218 | **RHD4-02-002-STL1-FLOW METER CHAMABER** |  | 2027-07-31 | 2027-09-27 |  |
|  | 219 | **RHD4-02-002-STL1-Concrete works** |  | 2027-07-31 | 2027-08-18 |  |
| RHD4CSTL1B07D031156 |  | Lean Concrete Plain Concrete - (B7.03 00 00 .01)-STL1-B07-D03 | 2d | 2027-07-31 | 2027-08-01 | RHD4CSTL1B07D031034, RHD4CSTL1B07D091072, RHD4CSTL1B07D091090 SS, RHD4CSTL1B07D151033 SS, RHD4CSTL1B07D151096 |
| RHD4CSTL1B07D031157 |  | Water proofing membrance Bituminous Sheet - (B7.07 13 13.01)-STL1-B07-D03 | 3d | 2027-08-02 | 2027-08-04 | RHD4CSTL1B07D031156, RHD4PRSHLDOSLFS1200, RHD4PRSHLSTAGLFS1200 |
| RHD4CSTL1B07D031158 |  | Screed 50mm - (B7.03 00 00 .04)-STL1-B07-D03 | 2d | 2027-08-05 | 2027-08-07 | RHD4CSTL1B07D031157 |
| RHD4CSTL1B07D031159 |  | Steel Fixing - (B7.03 00 00 .04)-STL1-B07-D03 | 4d | 2027-08-08 | 2027-08-11 | RHD4CSTL1B07D031158 |
| RHD4CSTL1B07D031160 |  | Formwork - (B7.03 00 00 .04)-STL1-B07-D03 | 4d | 2027-08-12 | 2027-08-16 | RHD4CSTL1B07D031159 |
| RHD4CSTL1B07D031161 |  | RC Casting Fluid-Applied - (B7.03 00 00 .04)-STL1-B07-D03 | 2d | 2027-08-17 | 2027-08-18 | RHD4CSTL1B07D031160 |
|  | 220 | **RHD4-02-002-STL1-Retaining Walls & Slab** |  | 2027-08-19 | 2027-09-02 |  |
| RHD4CSTL1B07D031162 |  | Steel Fixing - (B7.03 00 00 .07)-STL1-B07-D03 | 4d | 2027-08-19 | 2027-08-23 | RHD4CSTL1B07D031161, RHD4ENSTL1APPSTC1000 |
| RHD4CSTL1B07D031163 |  | Formwork - (B7.03 00 00 .07)-STL1-B07-D03 | 3d | 2027-08-24 | 2027-08-26 | RHD4CSTL1B07D031162, RHD4ENSTL1APPSTC1000 |
| RHD4CSTL1B07D031164 |  | RC Casting - (B7.03 00 00 .07)-STL1-B07-D03 | 4d | 2027-08-28 | 2027-08-31 | RHD4CSTL1B07D031163, RHD4ENSTL1APPSTC1000 |
| RHD4CSTL1B07D031165 |  | Water protection Board membrance Fluid-Applied - (B7.03 00 00 .07)-STL1-B07-D03 | 2d | 2027-09-01 | 2027-09-02 | RHD4CSTL1B07D031164, RHD4PRSHLDOSLFS1300, RHD4PRSHLSTAGLFS1300 |
|  | 221 | **RHD4-02-002-STL1-Metal Floor Door** |  | 2027-09-04 | 2027-09-08 |  |
| RHD4CSTL1B07D021166 |  | Installation of metal door size (600x600mm) - (B7.08 31 13.01)-STL1-B07-D02 | 5d | 2027-09-04 | 2027-09-08 | RHD4CSTL1B07D031165, RHD4PRSHLDOSLFS1400, RHD4PRSHLSTAGLFS1400 |
|  | 222 | **RHD4-02-002-STL1-Magnetic type flowmeter Installation** |  | 2027-09-09 | 2027-09-27 |  |
| RHD4CSTL1B07D151167 |  | Flow meter installation 150mm - (B7.22 05 19.03)-STL1-B07-D15 | 5d | 2027-09-09 | 2027-09-14 | RHD4CSTL1B07D021166, RHD4PRLOLSTAGLFS1200, RHD4ENSTL1APPMEC1200, RHD4GNPPSD1100, RHD4ENSDZ6SUBRD220, RHD4ENSDSTL1SUB3000 |
| RHD4CSTL1B07D151168 |  | UPVC Conduits 1 inch UPVC - (B7.22 05 19.03)-STL1-B07-D15 | 4d | 2027-09-15 | 2027-09-19 | RHD4CSTL1B07D151167, RHD4ENSTL1APPMEC1200, RHD4GNPPSD1100, RHD4ENSDZ6SUBRD220, RHD4ENSDSTL1SUB3000 |
| RHD4CSTL1B07D151169 |  | Electrical power and cable connection - (B7.22 05 19.03)-STL1-B07-D15 | 3d | 2027-09-20 | 2027-09-22 | RHD4CSTL1B07D151168 |
| RHD4CSTL1B07D151170 |  | Flow meter Panel Integration and connection - (B7.22 05 19.03)-STL1-B07-D15 | 3d | 2027-09-25 | 2027-09-27 | RHD4CSTL1B07D151169 |
|  | 223 | **RHD4-02-002-STL1-GENERATOR FOUNDATION** |  | 2027-08-02 | 2027-10-21 |  |
|  | 224 | **RHD4-02-002-STL1-GENERATOR FOUNDATION-Concrete works** |  | 2027-08-02 | 2027-08-28 |  |
| RHD4CSTL1B07D031171 |  | Lean Concrete Plain Concrete - (B7.03 00 00 .01)-STL1-B07-D03 | 2d | 2027-08-02 | 2027-08-03 | RHD4CSTL1B07D031156, RHD4ENSTL1APPSTC1000 |
| RHD4CSTL1B07D031172 |  | Water proofing membrance Bituminous Sheet - (B7.07 13 13.01)-STL1-B07-D03 | 3d | 2027-08-04 | 2027-08-07 | RHD4CSTL1B07D031171, RHD4ENSTL1APPSTC1000, RHD4PRSHLDOSLFS1200, RHD4PRSHLSTAGLFS1200 |
| RHD4CSTL1B07D031173 |  | Screed 50mm - (B7.03 00 00 .04)-STL1-B07-D03 | 4d | 2027-08-08 | 2027-08-11 | RHD4CSTL1B07D031172, RHD4ENSTL1APPSTC1000 |
| RHD4CSTL1B07D031174 |  | Steel Fixing - (B7.03 00 00 .04)-STL1-B07-D03 | 4d | 2027-08-12 | 2027-08-16 | RHD4CSTL1B07D031173, RHD4ENSTL1APPSTC1000 |
| RHD4CSTL1B07D031175 |  | Formwork - (B7.03 00 00 .04)-STL1-B07-D03 | 5d | 2027-08-17 | 2027-08-22 | RHD4CSTL1B07D031174 |
| RHD4CSTL1B07D031176 |  | RC Casting - (B7.03 00 00 .04)-STL1-B07-D03 | 5d | 2027-08-23 | 2027-08-28 | RHD4CSTL1B07D031175 |
|  | 225 | **RHD4-02-002-STL1-Standby Diesel Generator** |  | 2027-08-29 | 2027-10-21 |  |
| RHD4CSTL1B07D151177 |  | Standby Diesel Generator Set 150 KVA - Installation 100kva - (B7.26 32 12.05)-STL1-B07-D15 | 4d | 2027-08-29 | 2027-09-01 | RHD4CSTL1B07D031176, RHD4ENSTL1APPELE1300, RHD4PRLOLSTAGLFS1600 |
| RHD4CSTL1B07D151178 |  | Automatic Transfer Switch ATS panel 300A - Installation 160A - (B7.26 32 12.06)-STL1-B07-D15 | 4d | 2027-09-02 | 2027-09-06 | RHD4CSTL1B07D151177, RHD4ENSTL1APPELE1300 |
| RHD4CSTL1B07D151179 |  | Lean Concrete Plain Concrete - (B7.03 00 00 .01)-STL1-B07-D15 | 5d | 2027-09-07 | 2027-09-12 | RHD4CSTL1B07D151178 |
| RHD4CSTL1B07D151180 |  | Water proofing membrance Bituminous Sheet - (B7.07 13 13.01)-STL1-B07-D15 | 5d | 2027-09-28 | 2027-10-03 | RHD4CSTL1B07D151179, RHD4CSTL1B07D161155 SS, RHD4PRSHLDOSLFS1200, RHD4PRSHLSTAGLFS1200 |
| RHD4CSTL1B07D151181 |  | Screed 50mm - (B7.03 00 00 .04)-STL1-B07-D15 | 3d | 2027-10-04 | 2027-10-06 | RHD4CSTL1B07D151180, RHD4CSTL1B07D151170 |
| RHD4CSTL1B07D151182 |  | Steel Fixing - (B7.03 00 00 .05)-STL1-B07-D15 | 4d | 2027-10-07 | 2027-10-11 | RHD4CSTL1B07D151181 |
| RHD4CSTL1B07D151183 |  | Formwork - (B7.03 00 00 .05)-STL1-B07-D15 | 3d | 2027-10-12 | 2027-10-14 | RHD4CSTL1B07D151182 |
| RHD4CSTL1B07D151184 |  | RC Casting - (B7.03 00 00 .05)-STL1-B07-D15 | 3d | 2027-10-16 | 2027-10-18 | RHD4CSTL1B07D151183 |
| RHD4CSTL1B07D151185 |  | Water protection Board membrance Fluid-Applied - (B7.07 13 13.01)-STL1-B07-D15 | 3d | 2027-10-19 | 2027-10-21 | RHD4CSTL1B07D151184, RHD4PRSHLDOSLFS1300, RHD4PRSHLSTAGLFS1300 |
|  | 4 | **Sewage Lift Station 01** |  | 2026-12-06 | 2027-09-18 |  |
|  | 20 | **RHD4-02-002-Sewage Lift Station 01-Electrical Room** |  | 2026-12-17 | 2027-09-04 |  |
|  | 21 | **RHD4-02-002-SWL1-B07-Sub Structure** |  | 2026-12-17 | 2027-05-12 |  |
|  | 22 | **RHD4-02-002-SWL1-B07-Electrical Room-Plain Concrete** |  | 2026-12-17 | 2026-12-22 |  |
| RHD4CSWL1B07D031035 |  | Shuttering Plain Concrete for Electrical Room - (B7.03 00 00 .01)-SWL1-B07-D03 | 3d | 2026-12-17 | 2026-12-20 | RHD4CZ9L02ST1501, RHD4CZ9L02ST1504, RHD4CZ9L02ST1506, RHD4CZ8L04ST2200, RHD4CZ8L04ST1504, RHD4CZ8A011ST1504, RHD4CZ8A011ST1509, RHD4CZ4L014ST8500, RHD4CZ5L016SW3500, RHD4CZ5L08PT4500, RHD4CZ5C061PT3200, RHD4CZ5C061PT4500, RHD4CZ5C051ICT3400, RHD4CZ5C051TC3400, RHD4CZ6A015PT4500, RHD4CZ6A015PT3202, RHD4CZ6A015PT3200 |
| RHD4CSWL1B07D031036 |  | Lean Concrete Plain Concrete for Electrical Room - (B7.03 00 00 .01)-SWL1-B07-D03 | 2d | 2026-12-21 | 2026-12-22 | RHD4CSWL1B07D031035, RHD4CZ8L04ST1502, RHD4CZ8A011ST1502, RHD4CZ8A011ST1503, RHD4CZ4C031PT2400, RHD4CZ4C031PT3203 |
|  | 23 | **RHD4-02-002-SWL1-B07-Electrical Room-Footing / Foundation** |  | 2026-12-23 | 2027-01-05 |  |
| RHD4CSWL1B07D031037 |  | Shuttering Foundation for Electrical Room - (B7.03 00 00 .05)-SWL1-B07-D03 | 3d | 2026-12-23 | 2026-12-26 | RHD4CSWL1B07D031036 |
| RHD4CSWL1B07D031038 |  | Steel Fixing Foundation for Electrical Room - (B7.03 00 00 .05)-SWL1-B07-D03 | 4d | 2026-12-27 | 2026-12-30 | RHD4CSWL1B07D031037, RHD4CZ3C083SW3500, RHD4CZ1C081SW3500, RHD4CZ9L02ST3502, RHD4CZ8A011ST1500, RHD4CZ5L07SW3500, RHD4CZ6C052PT3200, RHD4CZ4L09PT3203, RHD4CZ4L09PT3202 |
| RHD4CSWL1B07D031039 |  | RC Casting Foundation for Electrical Room - (B7.03 00 00 .05)-SWL1-B07-D03 | 2d | 2026-12-31 | 2027-01-02 | RHD4CSWL1B07D031038, RHD4CZ2C082ST1200, RHD4CZ9L02ST3500, RHD4CZ4C031SL2400, RHD4CZ4C031MV2400, RHD4CZ4C031PT4500, RHD4CZ6A015IRR3202 |
| RHD4CSWL1B07D031040 |  | Deshuttering Foundation for Electrical Room - (B7.03 00 00 .05)-SWL1-B07-D03 | 3d | 2027-01-03 | 2027-01-05 | RHD4CSWL1B07D031039, RHD4CZ2C082ST1501, RHD4CZ8A011ST8500, RHD4CZ4L014PT3202, RHD4CZ4C031ICT3400, RHD4CZ5A014PT3202, RHD4CZ6A015IRR3203 |
|  | 24 | **RHD4-02-002-SWL1-B07-Electrical Room-Neck Column** |  | 2027-01-06 | 2027-01-20 |  |

| ID | WBS | Task | Duration | Start | Finish | Predecessors |
| --- | --- | --- | --- | --- | --- | --- |
| RHD4CSWL1B07D031041 |  | Steel Fixing for Neck Column for Electrical Room - (B7.03 00 00 .06)-SWL1-B07-D03 | 3d | 2027-01-06 | 2027-01-09 | RHD4CSWL1B07D031040, RHD4CZ2C082ST3502, RHD4CZ6C052PT4500, RHD4CZ6A015ST7500, RHD4CZ6C062PT4500 |
| RHD4CSWL1B07D031042 |  | Shuttering for Neck Column for Electrical Room - (B7.03 00 00 .06)-SWL1-B07-D03 | 4d | 2027-01-10 | 2027-01-13 | RHD4CSWL1B07D031041 |
| RHD4CSWL1B07D031043 |  | RC Casting for Neck Column for Electrical Room - (B7.03 00 00 .06)-SWL1-B07-D03 | 3d | 2027-01-14 | 2027-01-17 | RHD4CSWL1B07D031042 |
| RHD4CSWL1B07D031044 |  | Deshuttering for Neck Column for Electrical Room - (B7.03 00 00 .06)-SWL1-B07-D03 | 3d | 2027-01-18 | 2027-01-20 | RHD4CSWL1B07D031043, RHD4CZ7C02ST1508, RHD4CZ7C013IRR1500, RHD4CZ7L03ST1500, RHD4CZ9C071ST3501, RHD4CZ8L04ST3502, RHD4CZ8A011ST3502, RHD4CZ4L014IRR3202 |
|  | 25 | **RHD4-02-002-SWL1-B07-Electrical Room-Ground Beams** |  | 2027-01-21 | 2027-02-03 |  |
| RHD4CSWL1B07D031045 |  | Steel Fixing for Ground Beams for Electrical Room - (B7.03 00 00 .08)-SWL1-B07-D03 | 3d | 2027-01-21 | 2027-01-24 | RHD4CSWL1B07D031044, RHD4CZ2C082ST8500, RHD4CZ7C02ST1500, RHD4CZ7L03ST3502, RHD4CZ9L02PT3203, RHD4CZ9C071ST3502, RHD4CZ8L04SW2500, RHD4CZ4C031RD2100, RHD4CZ7RA05SL2400 |
| RHD4CSWL1B07D031046 |  | Shuttering for Ground Beams for Electrical Room - (B7.03 00 00 .08)-SWL1-B07-D03 | 4d | 2027-01-25 | 2027-01-28 | RHD4CSWL1B07D031045, RHD4CZ2L011PT3203, RHD4CZ9L06ST1505, RHD4CZ9C071ST3500, RHD4CZ8L04SW3501, RHD4CZ8A011ST3501, RHD4CZ5L016ICT3400 |
| RHD4CSWL1B07D031047 |  | RC Casting for Ground Beams for Electrical Room - (B7.03 00 00 .08)-SWL1-B07-D03 | 2d | 2027-01-30 | 2027-01-31 | RHD4CSWL1B07D031046, RHD4CZ1L101PT4500, RHD4CZ7C02ST8100, RHD4CZ9L02IRR3202, RHD4CZ9L02ST7500, RHD4CZ9L05ST7500, RHD4CZ8L04IRR1503 FF, RHD4CZ8A011ST3500 |
| RHD4CSWL1B07D031048 |  | Deshuttering for Ground Beams for Electrical Room - (B7.03 00 00 .08)-SWL1-B07-D03 | 3d | 2027-02-01 | 2027-02-03 | RHD4CSWL1B07D031047, RHD4CZ2L011MV2400, RHD4CZ2L011PT4500, RHD4CZ9L02IRR3201, RHD4CZ9L02IRR2400, RHD4CZ9L02IRR1507 FF, RHD4CZ9L06ST1502, RHD4CZ8L04ST3401, RHD4CZ7RA05RD2100 |
|  | 26 | **RHD4-02-002-SWL1-B07-Electrical Room-Aggregate base Course** |  | 2027-02-04 | 2027-02-11 |  |
| RHD4CSWL1B07D031049 |  | Laying Aggregate base course Slab on Grade - (B7.32 11 23.01)-SWL1-B07-D03 | 4d | 2027-02-04 | 2027-02-08 | RHD4CSWL1B07D031048, RHD4CZ7L03SW1500, RHD4CZ7L03ST7500, RHD4CZ9L06ST1500, RHD4CZ8L04SW3500, RHD4CZ4L014SW3500, RHD4CZ5L07IRR3202, RHD4CZ5L016PT4500 |
| RHD4CSWL1B07D031050 |  | Compaction Slab on Grade - (B7.32 11 23.01)-SWL1-B07-D03 | 3d | 2027-02-09 | 2027-02-11 | RHD4CSWL1B07D031049, RHD4CZ2L011ICT3400, RHD4CZ2L011LV2400, RHD4CZ8L04PT4500, RHD4CZ8L04PT3200, RHD4CZ8L04ST7500, RHD4CZ5L07ICT3400, RHD4CZ5L07SL2400 |
|  | 27 | **RHD4-02-002-SWL1-B07-Electrical Room-Slab on Grade** |  | 2027-02-13 | 2027-03-07 |  |
| RHD4CSWL1B07D031051 |  | Screeding for SOG works Slab on Grade for Electrical Room - (B7.03 00 00 .02)-SWL1-B07-D03 | 4d | 2027-02-13 | 2027-02-16 | RHD4CSWL1B07D031050, RHD4CZ3L122SW3500, RHD4CZ2L102IRR3200, RHD4CZ7C02ST3500, RHD4CZ2L102ST4600, RHD4CZ4L09PT4500, RHD4CZ4C012IRR1504 |
| RHD4CSWL1B07D031052 |  | Shuttering for Slab on Grade for Electrical Room - (B7.03 00 00 .09)-SWL1-B07-D03 | 5d | 2027-02-17 | 2027-02-23 | RHD4CSWL1B07D031051, RHD4CZ7C02ST3501, RHD4CZ9L02PT3200, RHD4CZ9L02PT3202, RHD4CZ8A011SW2500 |
| RHD4CSWL1B07D031053 |  | Steel Fixing for Slab on Grade for Electrical Room - (B7.03 00 00 .09)-SWL1-B07-D03 | 5d | 2027-02-24 | 2027-03-01 | RHD4CSWL1B07D031052, RHD4CZ1C081PT4500, RHD4CZ1L101SW3500, RHD4CZ7C02SW1500, RHD4CZ7L03SW3000, RHD4CZ7L03SW4403, RHD4CZ7L03SW4401, RHD4CZ7L03SW5201, RHD4CZ7L03SW5200, RHD4CZ9L06ST3502, RHD4CZ9L05PT5100, RHD4CZ9C071PT3202, RHD4PRLOLSTAGLFS1400, RHD4PRLOLSTAGLFS1300, RHD4PRLOLSTAGLFS1200 |
| RHD4CSWL1B07D031054 |  | RC Casting for Slab on Grade for Electrical Room - (B7.03 00 00 .09)-SWL1-B07-D03 | 2d | 2027-03-02 | 2027-03-03 | RHD4CSWL1B07D031053, RHD4CZ3C011PT3202, RHD4CZ3C011PT3201, RHD4CZ2L102PT4500, RHD4CZ9L06SW3501, RHD4CZ9L05PT3200, RHD4CZ9L05PT3203, RHD4CZ9L05PT2402, RHD4CZ8A011IRR3203, RHD4PRLOLSTAGLFS1700 FF, RHD4PRLOLSTAGLFS2000, RHD4PRLOLSTAGLFS1600 |
| RHD4CSWL1B07D031055 |  | Deshuttering for Slab on Grade for Electrical Room - (B7.03 00 00 .09)-SWL1-B07-D03 | 3d | 2027-03-04 | 2027-03-07 | RHD4CSWL1B07D031054, RHD4CZ2C082PT4500, RHD4CZ9L06ST7500, RHD4CZ9L05SW3500, RHD4CZ8L04IRR2402 |
|  | 28 | **RHD4-02-002-SWL1-B07-Electrical Room-Fluid-Applied Waterproofing** |  | 2027-03-08 | 2027-03-15 |  |
| RHD4CSWL1B07D071056 |  | 2 coats of bitumen on Grade Beams and SOW Slab on Grade - (B7.07 14 00.01)-SWL1-B07-D07 | 4d | 2027-03-08 | 2027-03-15 | RHD4CSWL1B07D031055, RHD4PRSHLDOSLFS1200, RHD4PRSHLSTAGLFS1200, RHD4CZ3L122IRR1300, RHD4CZ3L122PT3201, RHD4CZ8L04IRR3203, RHD4CZ5L07PT4500 |
|  | 29 | **RHD4-02-002-SWL1-B07-Electrical Room-Vapor Retarders** |  | 2027-03-16 | 2027-03-18 |  |
| RHD4CSWL1B07D071057 |  | 250 micron Polyethylene sheet Slab on Grade - (B7.07 26 16.01)-SWL1-B07-D07 | 3d | 2027-03-16 | 2027-03-18 | RHD4CSWL1B07D071056, RHD4PRSHLDOSLFS1200, RHD4PRSHLSTAGLFS1200, RHD4CZ3C011ICT3400, RHD4CZ3C011IRR2402, RHD4CZ3C011IRR3202, RHD4CZ3C011IRR3203, RHD4CZ9L06SW3500, RHD4CZ9L05PT4500, RHD4CZ9C071ST7500, RHD4CZ8L04IRR3200, RHD4CZ4C012IRR3200, RHD4CZ4L09ST7500, RHD4CZ7L03IRR3102, RHD4CZ7L03IRR2401, RHD4CZ8A011IRR1503, RHD4CZ8A011IRR3201, RHD4PRLOLSTACCTV1001 |
|  | 30 | **RHD4-02-002-SWL1-B07-Electrical Room-Columns** |  | 2027-03-20 | 2027-04-04 |  |
| RHD4CSWL1B07D031058 |  | Shuttering for Columns for Electrical Room - (B7.03 00 00 .13)-SWL1-B07-D03 | 5d | 2027-03-20 | 2027-03-24 | RHD4CSWL1B07D071057, RHD4CZ3C011LV2400, RHD4CZ3C011MV2400, RHD4CZ7L03IRR3200, RHD4CZ9L02IRR1500, RHD4CZ9L05ST3500 |
| RHD4CSWL1B07D031059 |  | Steel Fixing for Columns for Electrical Room - (B7.03 00 00 .13)-SWL1-B07-D03 | 3d | 2027-03-25 | 2027-03-28 | RHD4CSWL1B07D031058, RHD4CZ3C011IRR3201, RHD4CZ7C02PT3202, RHD4CZ4L09PT3201, RHD4CZ4L09ST3501, RHD4CZ4L014PT4500, RHD4PRLOLSTAGMV1602, RHD4PRLOLSTAGMV1601, RHD4CZ8RA04SL2400, RHD4CZ7C032IRR3200, RHD4CZ4C031RW3000, RHD4CZ7C032PT4500 FF, RHD4CZ7L03IRR3201 FF, RHD4CZ7L03IRR3203, RHD4CZ8A011PT4500, RHD4CZ4C012LV4300, RHD4CZ8A011PT2401 |
| RHD4CSWL1B07D031060 |  | RC Casting for Columns for Electrical Room - (B7.03 00 00 .13)-SWL1-B07-D03 | 2d | 2027-03-29 | 2027-03-30 | RHD4CSWL1B07D031059, RHD4CZ7C02PT3200, RHD4CZ7C02PT4500, RHD4CZ9L06PT4500, RHD4CZ8A011PT3201, RHD4CZ8A011PT3202, RHD4CZ7C02ST3502, RHD4CZ8L04SL2400, RHD4CZ4C012RW3000, RHD4CZ7C032RD7100, RHD4CZ7C032RD8100 |
| RHD4CSWL1B07D031061 |  | Deshuttering for Columns for Electrical Room - (B7.03 00 00 .13)-SWL1-B07-D03 | 4d | 2027-03-31 | 2027-04-04 | RHD4CSWL1B07D031060, RHD4CZ3C083ST8500, RHD4CZ3C011PT4500, RHD4CZ8A011PT3203, RHD4CZ4L09PT3203, RHD4CZ4RA02SL5200 |
|  | 31 | **RHD4-02-002-SWL1-B07-Electrical Room-Beams** |  | 2027-04-05 | 2027-04-28 |  |
| RHD4CSWL1B07D031062 |  | Shuttering for Roof Beams for Electrical Room - (B7.03 00 00 .14)-SWL1-B07-D03 | 6d | 2027-04-05 | 2027-04-11 | RHD4CSWL1B07D031061, RHD4CZ9C071LV3400, RHD4CZ3L122PT4500 FF, RHD4CZ7A012PT3201, RHD4CZ7A012PT4500, RHD4CZ5B14EX1003, RHD4CZ5RA07CCTV1500 FF |
| RHD4CSWL1B07D031063 |  | Steel Fixing for Roof Beams for Electrical Room - (B7.03 00 00 .14)-SWL1-B07-D03 | 8d | 2027-04-12 | 2027-04-20 | RHD4CSWL1B07D031062, RHD4CZ7C02ST8500, RHD4CZ9L02PT4500, RHD4CZ4L09PT3200, RHD4CZ4RA02SL1500, RHD4CZ6C052RD7100 FF, RHD4CZ7A012IRR5100, RHD4CZ6RA01RD9100, RHD4CZ3L122PT3202, RHD4CZ7A012IRR3202, RHD4CZ3C011SL3100 |
| RHD4CSWL1B07D031064 |  | RC Casting for Roof Beams for Electrical Room - (B7.03 00 00 .14)-SWL1-B07-D03 | 4d | 2027-04-21 | 2027-04-25 | RHD4CSWL1B07D031063, RHD4CZ3C083ST7500, RHD4CZ8A011ST7500, RHD4CZ1C081TC5200, RHD4CZ4L01RD7100, RHD4CZ7C02IRR3202, RHD4CZ3L122LV5200 |
| RHD4CSWL1B07D031065 |  | Deshuttering for Roof Beams for Electrical Room - (B7.03 00 00 .14)-SWL1-B07-D03 | 3d | 2027-04-26 | 2027-04-28 | RHD4CSWL1B07D031064, RHD4CZ7L03PT4500, RHD4CZ7L03SW3500, RHD4CZ9L02SW3500, RHD4CZ4C031SL6100, RHD4CZ4C031SL1500, RHD4CZ4A013LV5100, RHD4CZ1L101ICT5200, RHD4CZ2B05EX1001, RHD4CZ9L05RD7100 |
|  | 32 | **RHD4-02-002-SWL1-B07-Electrical Room-Roof Slab** |  | 2027-04-29 | 2027-05-12 |  |
| RHD4CSWL1B07D031066 |  | Shuttering for Roof Slab for Electrical Room - (B7.03 00 00 .15)-SWL1-B07-D03 | 3d | 2027-04-29 | 2027-05-02 | RHD4CSWL1B07D031065, RHD4CZ3L122SL1100, RHD4CZ1C081ICT2400 |
| RHD4CSWL1B07D031067 |  | Steel Fixing for Roof Slab for Electrical Room - (B7.03 00 00 .15)-SWL1-B07-D03 | 4d | 2027-05-03 | 2027-05-06 | RHD4CSWL1B07D031066, RHD4CZ7L03IRR3202, RHD4CZ4C012RD7100, RHD4CZ5C061RD7100, RHD4CZ4BZ4EX1001, RHD4CZ3L122SL5200, RHD4CZ4A013RD4100, RHD4CZ5C061RD8100, RHD4CZ9L02TC5200 |
| RHD4CSWL1B07D031068 |  | RC Casting for Roof Slab for Electrical Room - (B7.03 00 00 .15)-SWL1-B07-D03 | 2d | 2027-05-08 | 2027-05-09 | RHD4CSWL1B07D031067, RHD4CZ4L09SW3500, RHD4CZ4A013RD8100, RHD4CZ4B08EX1001 |
| RHD4CSWL1B07D031069 |  | Deshuttering for Roof Slab for Electrical Room - (B7.03 00 00 .15)-SWL1-B07-D03 | 3d | 2027-05-10 | 2027-05-12 | RHD4CSWL1B07D031068, RHD4CZ4L09PT4500, RHD4CZ3BZ3EX1002 |
|  | 33 | **RHD4-02-002-SWL1-B07-Finishes** |  | 2027-05-13 | 2027-07-03 |  |
|  | 34 | **RHD4-02-002-SWL1-B07-Finishes-Masonary** |  | 2027-05-13 | 2027-05-23 |  |
| RHD4CSWL1B07D091070 |  | Masonary Block work (CMU walls) Insulated Block Work - (B7.04 22 00.01)-SWL1-B07-D09 | 5d | 2027-05-13 | 2027-05-23 | RHD4CSWL1B07D031069, RHD4ENSWL1APPARC1100, RHD4GNPPSD1100, RHD4ENSDSWL1SUB2000, RHD4ENSDZ6SUBRD220, RHD4ENSDSTL1SUB2000 |
|  | 35 | **RHD4-02-002-SWL1-B07-Finishes-Roofs waterproofing system** |  | 2027-05-13 | 2027-06-08 |  |
| RHD4CSWL1B07D071071 |  | 250 micron Polyethylene sheet - (B7.07 00 00.06)-SWL1-B07-D07 | 2d | 2027-05-13 | 2027-05-19 | RHD4CSWL1B07D091070 SS, RHD4PRSHLDOSLFS1200, RHD4PRSHLDOSLFS1100, RHD4PRSHLSTAGLFS1200, RHD4PRSHLSTAGLFS1100, RHD4ENSWL1APPARC1100, RHD4GNPPSD1100, RHD4ENSDSWL1SUB2000, RHD4ENSDZ6SUBRD220, RHD4ENSDSTL1SUB2000 |
| RHD4CSWL1B07D071072 |  | 50 mm thick minimum Foam Concrete - (B7.07 00 00.05)-SWL1-B07-D07 | 3d | 2027-05-20 | 2027-05-23 | RHD4CSWL1B07D071071, RHD4PRSHLDOSLFS1100, RHD4PRSHLSTAGLFS1100, RHD4ENSWL1APPARC1100, RHD4GNPPSD1100, RHD4ENSDSWL1SUB2000, RHD4ENSDZ6SUBRD220, RHD4ENSDSTL1SUB2000 |
| RHD4CSWL1B07D071073 |  | 30 mm thick Screed Concrete - (B7.07 00 00.04)-SWL1-B07-D07 | 3d | 2027-05-24 | 2027-05-26 | RHD4CSWL1B07D071072, RHD4PRSHLDOSLFS1100, RHD4PRSHLSTAGLFS1100, RHD4CZ2C082CCTV6100, RHD4CZ2C082RD3200, RHD4CZ4RA02RD7100, RHD4CZ6RA01CCTV1500, RHD4ENSWL1APPARC1100, RHD4GNPPSD1100, RHD4ENSDSWL1SUB2000, RHD4ENSDZ6SUBRD220, RHD4ENSDSTL1SUB2000, RHD4GNSLZ1FT1600 |
| RHD4CSWL1B07D071074 |  | 4 mm thick Waterproofing Bituminous Membrane - (B7.07 00 00.03)-SWL1-B07-D07 | 3d | 2027-05-27 | 2027-05-30 | RHD4CSWL1B07D071073, RHD4PRSHLDOSLFS1200, RHD4PRSHLDOSLFS1100, RHD4PRSHLSTAGLFS1200, RHD4PRSHLSTAGLFS1100, RHD4CZ4C031CCTV1500, RHD4CZ6C052SL6100, RHD4ENSWL1APPARC1100, RHD4GNPPSD1100, RHD4ENSDSWL1SUB2000, RHD4ENSDZ6SUBRD220, RHD4ENSDSTL1SUB2000, RHD4CZ7B24BF2000 |
| RHD4CSWL1B07D071075 |  | Geotextile Membrane - (B7.07 00 00.02)-SWL1-B07-D07 | 4d | 2027-05-31 | 2027-06-03 | RHD4CSWL1B07D071074, RHD4PRSHLDOSLFS1100, RHD4PRSHLSTAGLFS1100, RHD4CZ6A02CCTV6100, RHD4ENSWL1APPARC1100, RHD4GNPPSD1100, RHD4ENSDSWL1SUB2000, RHD4ENSDZ6SUBRD220, RHD4ENSDSTL1SUB2000, RHD4CZ4B07EX1001 |
| RHD4CSWL1B07D071076 |  | 50 mm thick Gravel Toppings - (B7.07 00 00.01)-SWL1-B07-D07 | 4d | 2027-06-05 | 2027-06-08 | RHD4CSWL1B07D071075, RHD4PRSHLDOSLFS1100, RHD4PRSHLSTAGLFS1100, RHD4CZ1L101LV3400, RHD4CZ2C082SL1500, RHD4CZ7L03MV4200, RHD4CZ4A013TC2400, RHD4CZ4L01MV3300, RHD4ENSWL1APPARC1100, RHD4GNPPSD1100, RHD4ENSDSWL1SUB2000, RHD4ENSDZ6SUBRD220, RHD4ENSDSTL1SUB2000, RHD4GNSLZ2FT1600 |
|  | 36 | **RHD4-02-002-SWL1-B07-Finishes-Manufactured Copings** |  | 2027-06-05 | 2027-06-09 |  |
| RHD4CSWL1B07D091077 |  | Supply and install Stone coping 40mm thickness Insulated Block Work - (B7.07 71 13.01)-SWL1-B07-D09 | 5d | 2027-06-05 | 2027-06-09 | RHD4CSWL1B07D071076 SS, RHD4ENSWL1APPARC1100, RHD4GNPPSD1100, RHD4ENSDSWL1SUB2000, RHD4ENSDZ6SUBRD220, RHD4ENSDSTL1SUB2000 |
|  | 37 | **RHD4-02-002-SWL1-B07-Finishes-Doors & Windows** |  |  |  |  |
|  | 38 | **RHD4-02-002-SWL1-B07-Finishes-Cement Plastering** |  | 2027-06-05 | 2027-06-09 |  |
| RHD4CSWL1B07D091079 |  | Internal Plastering For Walls 15mm - (B7.09 24 00.01)-SWL1-B07-D09 | 5d | 2027-06-05 | 2027-06-09 | RHD4CSWL1B07D091077 SS, RHD4ENSWL1APPARC1100, RHD4GNPPSD1100, RHD4ENSDSWL1SUB2000, RHD4ENSDZ6SUBRD220, RHD4ENSDSTL1SUB2000 |
| RHD4CSWL1B07D091080 |  | External Plastering for walls 20mm - (B7.09 24 00.02)-SWL1-B07-D09 | 5d | 2027-06-05 | 2027-06-09 | RHD4CSWL1B07D091079 SS, RHD4ENSWL1APPARC1100, RHD4GNPPSD1100, RHD4ENSDSWL1SUB2000, RHD4ENSDZ6SUBRD220, RHD4ENSDSTL1SUB2000 |
|  | 39 | **RHD4-02-002-SWL1-B07-Finishes-Metal Ladders** |  | 2027-06-05 | 2027-06-22 |  |
| RHD4CSWL1B07D051082 |  | Length 5.4m - (B7.05 51 33.06)-SWL1-B07-D05 | 6d | 2027-06-05 | 2027-06-10 | RHD4CSWL1B07D091080 SS, RHD4PRSHLDOSLFS1000, RHD4PRSHLSTAGLFS1000, RHD4ENSWL1APPARC1100, RHD4GNPPSD1100, RHD4ENSDSWL1SUB2000, RHD4ENSDZ6SUBRD220, RHD4ENSDSTL1SUB2000 |
| RHD4CSWL1B07D051084 |  | Installation of With cage, Length 4.3m - (B7.05 51 33.11)-SWL1-B07-D05 | 5d | 2027-06-12 | 2027-06-16 | RHD4CSWL1B07D051082, RHD4ENSWL1APPARC1100, RHD4GNPPSD1100, RHD4ENSDSWL1SUB2000, RHD4ENSDZ6SUBRD220, RHD4ENSDSTL1SUB2000 |
| RHD4CSWL1B07D051085 |  | Install Checkered plate - (B7.05 50 00 .01)-SWL1-B07-D05 | 5d | 2027-06-17 | 2027-06-22 | RHD4CSWL1B07D051084, RHD4PRSHLDOSLFS1000, RHD4PRSHLSTAGLFS1000, RHD4ENSWL1APPARC1100, RHD4GNPPSD1100, RHD4ENSDSWL1SUB2000, RHD4ENSDZ6SUBRD220, RHD4ENSDSTL1SUB2000 |
|  | 40 | **RHD4-02-002-SWL1-B07-Finishes-Painting** |  | 2027-06-23 | 2027-06-28 |  |
| RHD4CSWL1B07D091086 |  | Internal Acrylic Paint For Walls Acrylic Paint - (B7.09 91 00.01)-SWL1-B07-D09 | 5d | 2027-06-23 | 2027-06-28 | RHD4CSWL1B07D051085, RHD4PRSHLDOSLFS1500, RHD4PRSHLSTAGLFS1500, RHD4ENSWL1APPARC1100, RHD4GNPPSD1100, RHD4ENSDSWL1SUB2000, RHD4ENSDZ6SUBRD220, RHD4ENSDSTL1SUB2000 |
| RHD4CSWL1B07D091087 |  | External Acrylic Paint for walls Acrylic Paint - (B7.09 91 00.02)-SWL1-B07-D09 | 5d | 2027-06-23 | 2027-06-28 | RHD4CSWL1B07D091086 SS, RHD4PRSHLDOSLFS1500, RHD4PRSHLSTAGLFS1500, RHD4ENSWL1APPARC1100, RHD4GNPPSD1100, RHD4ENSDSWL1SUB2000, RHD4ENSDZ6SUBRD220, RHD4ENSDSTL1SUB2000 |
|  | 41 | **RHD4-02-002-SWL1-B07-Finishes-Epoxy Coating** |  | 2027-06-29 | 2027-07-03 |  |
| RHD4CSWL1B07D091088 |  | Internal Acrylic Paint For Walls Acrylic Paint - (B7.09 96 56.01)-SWL1-B07-D09 | 4d | 2027-06-29 | 2027-07-03 | RHD4CSWL1B07D091087, RHD4PRSHLDOSLFS1500, RHD4CSWL1B07D151032, RHD4PRSHLSTAGLFS1500, RHD4ENSWL1APPARC1100, RHD4GNPPSD1100, RHD4ENSDSWL1SUB2000, RHD4ENSDZ6SUBRD220, RHD4ENSDSTL1SUB2000 |
|  | 42 | **RHD4-02-002-SWL1-B07-Mechanical Works** |  | 2027-06-09 | 2027-07-26 |  |
|  | 43 | **RHD4-02-002-SWL1-B07-Mechanical Works-Wall mounted Split/AC** |  | 2027-07-04 | 2027-07-15 |  |
| RHD4CSWL1B07D151089 |  | Wall mounted Split Air Conditioning Unit. FCU-01 Installation 3.5 kw - (B7.23 81 26.01)-SWL1-B07-D15 | 6d | 2027-07-04 | 2027-07-10 | RHD4CSWL1B07D091088, RHD4PRSHLDOSLFS2200, RHD4PRSHLSTAGLFS2200, RHD4ENSWL1APPMEC1200, RHD4GNPPSD1100, RHD4ENSDSWL1SUB3000, RHD4ENSDZ6SUBRD220, RHD4ENSDSTL1SUB3000 |
| RHD4CSWL1B07D151090 |  | Wall mounted Split Air Conditioning Unit. FCU-01 Installation 3.5 kw - (B7.23 81 26.01)-SWL1-B07-D15 | 5d | 2027-07-11 | 2027-07-15 | RHD4CSWL1B07D151089, RHD4PRSHLDOSLFS2200, RHD4PRSHLSTAGLFS2200 |
|  | 44 | **RHD4-02-002-SWL1-B07-Mechanical Works-Portable Fire Extinguishers** |  | 2027-07-17 | 2027-07-26 |  |
| RHD4CSWL1B07D151091 |  | Powder fire extinguishers installation - (B7.21 20 00.01)-SWL1-B07-D15 | 5d | 2027-07-17 | 2027-07-21 | RHD4CSWL1B07D151090, RHD4ENSWL1APPMEC1200, RHD4GNPPSD1100, RHD4ENSDSWL1SUB3000, RHD4ENSDZ6SUBRD220, RHD4ENSDSTL1SUB3000 |
| RHD4CSWL1B07D151092 |  | CO2 fire extinguishers installation - (B7.21 20 00.02)-SWL1-B07-D15 | 4d | 2027-07-22 | 2027-07-26 | RHD4CSWL1B07D151091, RHD4ENSWL1APPMEC1200, RHD4GNPPSD1100, RHD4ENSDSWL1SUB3000, RHD4ENSDZ6SUBRD220, RHD4ENSDSTL1SUB3000 |
|  | 45 | **RHD4-02-002-SWL1-B07-Mechanical Works-Scupper** |  | 2027-06-09 | 2027-06-12 |  |

| ID | WBS | Task | Duration | Start | Finish | Predecessors |
| --- | --- | --- | --- | --- | --- | --- |
| RHD4CSWL1B07D151093 |  | Scupper with diameter 110mm - Installation - (B7.22 13 19.13.01)-SWL1-B07-D15 | 3d | 2027-06-09 | 2027-06-12 | RHD4CSWL1B07D071076, RHD4CZ2C082TC5200, RHD4CZ2L011SL5200, RHD4ENSWL1APPMEC1200, RHD4GNPPSD1100, RHD4ENSDSWL1SUB3000, RHD4ENSDZ6SUBRD220, RHD4ENSDSTL1SUB3000, RHD4CZ7L03CCTV1500 |
|  | 46 | **RHD4-02-002-SWL1-B07-Mechanical Works-Pipes, Fittings & Appurtenances** |  | 2027-06-13 | 2027-06-16 |  |
| RHD4CSWL1B07D151094 |  | uPVC pipes with diameter 110mm. Roof Slab - (B7.22 13 16.01)-SWL1-B07-D15 | 3d | 2027-06-13 | 2027-06-15 | RHD4CSWL1B07D151093, RHD4PRSHLDOSLFS2100, RHD4PRSHLSTAGLFS2100, RHD4ENSWL1APPMEC1200, RHD4GNPPSD1100, RHD4ENSDSWL1SUB3000, RHD4ENSDZ6SUBRD220, RHD4ENSDSTL1SUB3000, RHD4CZ3C011SL4200 |
| RHD4CSWL1B07D151095 |  | uPVC pipes with diameter 25mm. Roof Slab - (B7.22 13 16.02)-SWL1-B07-D15 | 4d | 2027-06-13 | 2027-06-16 | RHD4CSWL1B07D151094 SS, RHD4PRSHLDOSLFS2100, RHD4PRSHLSTAGLFS2100, RHD4CZ4C031RD7100, RHD4ENSWL1APPMEC1200, RHD4GNPPSD1100, RHD4ENSDSWL1SUB3000, RHD4ENSDZ6SUBRD220, RHD4ENSDSTL1SUB3000 |
|  | 47 | **RHD4-02-002-SWL1-B07-Electrical Works** |  | 2027-05-24 | 2027-09-04 |  |
|  | 48 | **RHD4-02-002-SWL1-B07-Electrical Works-4Cx 185mm2 CU/XLPE/SWA/PVC** |  | 2027-05-24 | 2027-06-06 |  |
| RHD4CSWL1B07D161096 |  | Electrical Conduits and Pull Box Installation for LV Cables 4Cx185 mm²- (B7.26 05 19.01)-SWL1-B07-D16 | 4d | 2027-05-24 | 2027-05-27 | RHD4CSWL1B07D091070, RHD4ENSWL1APPELE1300 |
| RHD4CSWL1B07D161097 |  | Cable Tray Installation for LV Cables 4Cx185 mm²- (B7.26 05 19.01)-SWL1-B07-D16 | 3d | 2027-05-29 | 2027-05-31 | RHD4CSWL1B07D161096, RHD4ENSWL1APPELE1300 |
| RHD4CSWL1B07D161098 |  | LV Cable Pulling for LV Cables 4Cx185 mm²- (B7.26 05 19.01)-SWL1-B07-D16 | 2d | 2027-06-01 | 2027-06-02 | RHD4CSWL1B07D161097, RHD4PRSHLDOSLFS2600, RHD4PRSHLSTAGLFS2600 |
| RHD4CSWL1B07D161099 |  | LV Cable Termination for LV Cables 4Cx185 mm²- (B7.26 05 19.01)-SWL1-B07-D16 | 3d | 2027-06-03 | 2027-06-06 | RHD4CSWL1B07D161098 |
|  | 49 | **RHD4-02-002-SWL1-B07-Electrical Works-4Cx 70mm2 + 1Cx35mm2 Cu/XLPE/PVC FROM MCC-3 TO LP-01** |  | 2027-06-03 | 2027-06-16 |  |
| RHD4CSWL1B07D161100 |  | Electrical Conduits and Pull Box Installation for LV Cables 4Cx95 mm²- (B7.26 05 19.02)-SWL1-B07-D16 | 3d | 2027-06-03 | 2027-06-06 | RHD4CSWL1B07D161099 SS, RHD4ENSWL1APPELE1300 |
| RHD4CSWL1B07D161101 |  | Cable Tray Installation for LV Cables 4Cx95 mm²- (B7.26 05 19.02)-SWL1-B07-D16 | 2d | 2027-06-07 | 2027-06-08 | RHD4CSWL1B07D161100, RHD4ENSWL1APPELE1300 |
| RHD4CSWL1B07D161102 |  | LV Cable Pulling for LV Cables 4Cx95 mm²- (B7.26 05 19.02)-SWL1-B07-D16 | 4d | 2027-06-09 | 2027-06-13 | RHD4CSWL1B07D161101, RHD4PRSHLDOSLFS2600, RHD4PRSHLSTAGLFS2600 |
| RHD4CSWL1B07D161103 |  | LV Cable Termination for LV Cables 4Cx95 mm²- (B7.26 05 19.02)-SWL1-B07-D16 | 3d | 2027-06-14 | 2027-06-16 | RHD4CSWL1B07D161102 |
|  | 50 | **RHD4-02-002-SWL1-B07-Electrical Works-4Cx 6mm2 + 1Cx6mm2 Cu/XLPE/PVC** |  | 2027-06-07 | 2027-06-23 |  |
| RHD4CSWL1B07D161104 |  | Electrical Conduits and Pull Box Installation for LV Cables 4Cx10 mm²- (B7.26 05 19.03)-SWL1-B07-D16 | 3d | 2027-06-07 | 2027-06-09 | RHD4CSWL1B07D161096 SS, RHD4CSWL1B07D161100 |
| RHD4CSWL1B07D161105 |  | Cable Tray Installation for LV Cables 4Cx10 mm²- (B7.26 05 19.03)-SWL1-B07-D16 | 4d | 2027-06-10 | 2027-06-14 | RHD4CSWL1B07D161104, RHD4CZ4L09RD7100 |
| RHD4CSWL1B07D161106 |  | LV Cable Pulling for LV Cables 4Cx10 mm²- (B7.26 05 19.03)-SWL1-B07-D16 | 3d | 2027-06-15 | 2027-06-17 | RHD4CSWL1B07D161105, RHD4PRSHLDOSLFS2600, RHD4PRSHLSTAGLFS2600 |
| RHD4CSWL1B07D161107 |  | LV Cable Termination for LV Cables 4Cx10 mm²- (B7.26 05 19.03)-SWL1-B07-D16 | 5d | 2027-06-19 | 2027-06-23 | RHD4CSWL1B07D161106, RHD4CSWL1B07D161103, RHD4CSWL1B07D151094, RHD4CSWL1B07D151095 |
|  | 51 | **RHD4-02-002-SWL1-B07-Electrical Works-4Cx 95mm2 + 1Cx50mm2 Cu/XLPE/PVC** |  | 2027-06-13 | 2027-06-26 |  |
| RHD4CSWL1B07D161108 |  | Electrical Conduits and Pull Box Installation for LV Cables 4Cx10 mm²+1Cx10 mm²- (B7.26 05 19.05)-SWL1-B07-D16 | 3d | 2027-06-13 | 2027-06-15 | RHD4CSWL1B07D151095 SS, RHD4ENSWL1APPELE1300, RHD4CSWL1B07D161104 |
| RHD4CSWL1B07D161109 |  | Cable Tray Installation for LV Cables 4Cx10 mm²+1Cx10 mm²- (B7.26 05 19.05)-SWL1-B07-D16 | 4d | 2027-06-16 | 2027-06-20 | RHD4CSWL1B07D161108, RHD4CZ1CH1ST1200, RHD4CZ4C031CCTV6100, RHD4CSWL1B07D031205 |
| RHD4CSWL1B07D161110 |  | LV Cable Pulling for LV Cables 4Cx10 mm²+1Cx10 mm²- (B7.26 05 19.05)-SWL1-B07-D16 | 3d | 2027-06-21 | 2027-06-23 | RHD4CSWL1B07D161109, RHD4PRSHLDOSLFS2600, RHD4PRSHLSTAGLFS2600, RHD4CZ1L101SL1500, RHD4CZ4L014SL1300, RHD4CZ6RA01CCTV5200, RHD4CZ6A02RD7100, RHD4CZ1B03BF2000 |
| RHD4CSWL1B07D161111 |  | LV Cable Termination for LV Cables 4Cx10 mm²+1Cx10 mm²- (B7.26 05 19.05)-SWL1-B07-D16 | 2d | 2027-06-24 | 2027-06-26 | RHD4CSWL1B07D161110, RHD4CSWL1B07D161107 |
|  | 52 | **RHD4-02-002-SWL1-B07-Electrical Works-4Cx 4mm2 + 1Cx4mm2 Cu/XLPE/PVC** |  |  |  |  |
|  | 53 | **RHD4-02-002-SWL1-B07-Electrical Works-Wiring Devices** |  | 2027-06-27 | 2027-07-05 |  |
| RHD4CSWL1B07D161116 |  | 13A Signle Socket Outlet WP for Wiring Devices - (B7.26 27 26 .01)-SWL1-B07-D16 | 3d | 2027-06-27 | 2027-06-29 | RHD4CSWL1B07D161110, RHD4CSWL1B07D161106, RHD4CSWL1B07D161102, RHD4PRSHLDOSLFS2800, RHD4PRSHLSTAGLFS2800, RHD4PRSHLDOSLFS2600, RHD4PRSHLSTAGLFS2600, RHD4CSWL1B07D161111, RHD4ENSWL1APPELE1300, RHD4CSWL1B07D161108, RHD4CZ2L011SL1500, RHD4CZ2L011LV4300, RHD4CZ1C081SL1500, RHD4CZ5C061TC2400, RHD4GNLVZ1FT1500, RHD4GNLVZ3FT1500, RHD4GNTCZ6FT1800, RHD4GNLVZ8FT1500 |
| RHD4CSWL1B07D161117 |  | 13A Double Socket Outlet WP for Wiring Devices - (B7.26 27 26 .02)-SWL1-B07-D16 | 2d | 2027-06-30 | 2027-07-01 | RHD4CSWL1B07D161116, RHD4PRSHLDOSLFS2800, RHD4PRSHLSTAGLFS2800, RHD4CZ1L101ICT5200, RHD4CZ2L011TC2400, RHD4CZ7RA03LV4300, RHD4CZ4L09SL5200, RHD4CZ8L04CCTV1500 |
| RHD4CSWL1B07D161118 |  | 25A Switch Socket Outlet (for Split Unit), WP for Wiring Devices - (B7.26 27 26 .03)-SWL1-B07-D16 | 3d | 2027-07-03 | 2027-07-05 | RHD4CSWL1B07D161117, RHD4PRSHLDOSLFS2800, RHD4PRSHLSTAGLFS2800, RHD4CZ2L011ICT2400, RHD4CZ2L102LV3400, RHD4CZ7RA03CCTV2100, RHD4CZ4A013ICT2400, RHD4CZ4BZ4BF4001, RHD4CZ2B05BF2001 |
|  | 54 | **RHD4-02-002-SWL1-B07-Electrical Works-Grounding and Bonding** |  | 2027-07-03 | 2027-07-17 |  |
| RHD4CSWL1B07D161119 |  | Copper Conductor Connecting to Steel Rebar Installation for Copper Rods - (B7.26 05 26.01)-SWL1-B07-D16 | 4d | 2027-07-03 | 2027-07-06 | RHD4CSWL1B07D161118 SS, RHD4ENSWL1APPELE1300, RHD4PRSHLDOSLFS2500, RHD4PRSHLSTAGLFS2500 |
| RHD4CSWL1B07D161120 |  | Earth pits Installation for Copper Rods - (B7.26 05 26.01)-SWL1-B07-D16 | 4d | 2027-07-07 | 2027-07-11 | RHD4CSWL1B07D161119, RHD4CSWL1B07D161118, RHD4CZ6RA01RD8100, RHD4CZ7RA05ICT2400, RHD4CZ9B36BF2000 |
| RHD4CSWL1B07D161121 |  | Earth Bars Installation for Copper Rods - (B7.26 05 26.01)-SWL1-B07-D16 | 2d | 2027-07-12 | 2027-07-13 | RHD4CSWL1B07D161120, RHD4CZ4CH5ST1320 |
| RHD4CSWL1B07D161122 |  | Copper Tape on Roof Installation for Copper Rods - (B7.26 05 26.01)-SWL1-B07-D16 | 3d | 2027-07-14 | 2027-07-17 | RHD4CSWL1B07D161121, RHD4CZ7L03MV5400, RHD4CZ6C052ICT2400, RHD4CZ5RA07RD9200 |
|  | 55 | **RHD4-02-002-SWL1-B07-Electrical Works-Indoor Lighting Fixtures** |  | 2027-07-14 | 2027-08-02 |  |
| RHD4CSWL1B07D161123 |  | Electrical Conduits and Pull Box Installation - 24.5 W for Lighting Fixtures - (Indoor Lighting Fixtures )-SWL1-B07-D16 | 3d | 2027-07-14 | 2027-07-17 | RHD4CSWL1B07D161122 SS, RHD4ENSWL1APPELE1300 |
| RHD4CSWL1B07D161124 |  | LV Cable Pulling for Lighting Fixtures - (B7.26 51 00.01)-SWL1-B07-D16 | 3d | 2027-07-18 | 2027-07-20 | RHD4CSWL1B07D161123, RHD4CSWL1B07D161122, RHD4GNSLZ8FT1600, RHD4CZ1L101RW3000, RHD4GNLVZ7FT1500 |
| RHD4CSWL1B07D161126 |  | Electrical Conduits and Pull Box Installation - 8 W for Lighting Fixtures - (B7.26 51 00.02)-SWL1-B07-D16 | 3d | 2027-07-18 | 2027-07-20 | RHD4CSWL1B07D161123 |
| RHD4CSWL1B07D161125 |  | Lighting Fixture Installation for Lighting Fixtures - (B7.26 51 00.01)-SWL1-B07-D16 | 4d | 2027-07-21 | 2027-07-25 | RHD4CSWL1B07D161124, RHD4PRSHLDOSLFS2700, RHD4PRSHLSTAGLFS2700, RHD4CZ3C083RD5100, RHD4CZ9L02CCTV1500 |
| RHD4CSWL1B07D161127 |  | LV Cable Pulling for Lighting Fixtures - (B7.26 51 00.02)-SWL1-B07-D16 | 4d | 2027-07-21 | 2027-07-25 | RHD4CSWL1B07D161126 |
| RHD4CSWL1B07D161128 |  | Lighting Fixture Installation for Lighting Fixtures - (B7.26 51 00.02)-SWL1-B07-D16 | 7d | 2027-07-26 | 2027-08-02 | RHD4CSWL1B07D161127, RHD4PRSHLDOSLFS2700, RHD4CSWL1B07D161125, RHD4PRSHLSTAGLFS2700, RHD4CZ5L08RD7100 |
|  | 56 | **RHD4-02-002-SWL1-B07-Electrical Works-Outdoor Lighting Fixtures** |  | 2027-07-27 | 2027-08-15 |  |
| RHD4CSWL1B07D161129 |  | Electrical Conduits and Pull Box Installation - 7 W for Lighting Fixtures - (Outdoor Lighting Fixtures )-SWL1-B07-D16 | 4d | 2027-07-27 | 2027-07-31 | RHD4CSWL1B07D161128 SS, RHD4ENSWL1APPELE1300, RHD4CSWL1B07D161126, RHD4CSWL1B07D151092 |
| RHD4CSWL1B07D161130 |  | LV Cable Pulling for Lighting Fixtures - (B7.26 56 00.01)-SWL1-B07-D16 | 3d | 2027-08-01 | 2027-08-03 | RHD4CSWL1B07D161129 |
| RHD4CSWL1B07D161132 |  | Electrical Conduits and Pull Box Installation - 42.5 W for Lighting Fixtures - (B7.26 56 00.02)-SWL1-B07-D16 | 4d | 2027-08-01 | 2027-08-04 | RHD4CSWL1B07D161129 |
| RHD4CSWL1B07D161131 |  | Lighting Fixture Installation for Lighting Fixtures - (B7.26 56 00.01)-SWL1-B07-D16 | 3d | 2027-08-04 | 2027-08-07 | RHD4CSWL1B07D161130, RHD4ENSWL1APPELE1300, RHD4PRSHLDOSLFS2700, RHD4PRSHLSTAGLFS2700 |
| RHD4CSWL1B07D161133 |  | LV Cable Pulling for Lighting Fixtures - (B7.26 56 00.02)-SWL1-B07-D16 | 5d | 2027-08-05 | 2027-08-10 | RHD4CSWL1B07D161132 |
| RHD4CSWL1B07D161134 |  | Lighting Fixture Installation for Lighting Fixtures - (B7.26 56 00.02)-SWL1-B07-D16 | 4d | 2027-08-11 | 2027-08-15 | RHD4CSWL1B07D161133, RHD4ENSWL1APPELE1300, RHD4PRSHLDOSLFS2700, RHD4CSWL1B07D161131, RHD4PRSHLSTAGLFS2700 |
|  | 57 | **RHD4-02-002-SWL1-B07-Electrical Works- Enclosed Switches and Circuit Breakers** |  | 2027-07-14 | 2027-07-26 |  |
| RHD4CSWL1B07D161135 |  | 25-amp single-pole disconnect switches for Lighting Fixtures - (B7.26 28 16.01)-SWL1-B07-D16 | 3d | 2027-07-14 | 2027-07-17 | RHD4CSWL1B07D161122 SS, RHD4ENSWL1APPELE1300, RHD4PRSHLDOSLFS2900, RHD4PRSHLSTAGLFS2900, RHD4CZ7L03MV3401, RHD4CZ7L03MV3400 |
| RHD4CSWL1B07D161136 |  | 25-amp three-pole disconnect switches for Lighting Fixtures - (B7.26 28 16.02)-SWL1-B07-D16 | 4d | 2027-07-18 | 2027-07-21 | RHD4CSWL1B07D161135, RHD4ENSWL1APPELE1300, RHD4PRSHLDOSLFS2900, RHD4PRSHLSTAGLFS2900, RHD4CZ2L011RD8100, RHD4CZ2L011RD7100, RHD4CZ6RA01RD9100 |
| RHD4CSWL1B07D161137 |  | 125-amp three-pole disconnect switches for Lighting Fixtures - (B7.26 28 16.03)-SWL1-B07-D16 | 4d | 2027-07-22 | 2027-07-26 | RHD4CSWL1B07D161136, RHD4ENSWL1APPELE1300, RHD4PRSHLDOSLFS2900, RHD4PRSHLSTAGLFS2900, RHD4CZ3L122ICT2400, RHD4CZ7RA05RD8100 |
|  | 58 | **RHD4-02-002-SWL1-B07-Electrical Works-Secondery Panel Boards** |  | 2027-07-22 | 2027-08-05 |  |
| RHD4CSWL1B07D161138 |  | Panel "DB-U3" Installation for Panelboards - (B7.26 24 16.01)-SWL1-B07-D16 | 2d | 2027-07-22 | 2027-07-24 | RHD4CSWL1B07D161137 SS, RHD4ENSWL1APPELE1300, RHD4PRSHLDOSLFS2400, RHD4PRSHLSTAGLFS2400 |
| RHD4CSWL1B07D161139 |  | Panel "DB-U3" Termination for Panelboards - (B7.26 24 16.01)-SWL1-B07-D16 | 4d | 2027-07-25 | 2027-07-28 | RHD4CSWL1B07D161138, RHD4CZ6A015RD7100 |
| RHD4CSWL1B07D161140 |  | Panel "LPP-UT-3" Installation for Panelboards - (B7.26 24 16.02)-SWL1-B07-D16 | 4d | 2027-07-29 | 2027-08-02 | RHD4CSWL1B07D161139, RHD4ENSWL1APPELE1300, RHD4PRSHLDOSLFS2400, RHD4PRSHLSTAGLFS2400, RHD4CZ7C013ICT2400, RHD4CZ9L05ICT2400, RHD4CZ4C012RD7100, RHD4CZ6C052RD7100, RHD4CZ7RA05RD7100, RHD4GNCCTVZ1FT2000 |
| RHD4CSWL1B07D161141 |  | Panel "DB-UT-3" Termination for Panelboards - (B7.26 24 16.02)-SWL1-B07-D16 | 3d | 2027-08-03 | 2027-08-05 | RHD4CSWL1B07D161140, RHD4CZ7C013RD7100, RHD4GNCCTVZ6FT2000, RHD4CZ7L03RD7100, RHD4CZ9L06RD7100, RHD4HOASZ4APPSL170 |
|  | 60 | **RHD4-02-002-SWL1-B07-Electrical Works-Addressable Fire-Alarm System** |  | 2027-08-03 | 2027-08-24 |  |
| RHD4CSWL1B07D161145 |  | 1 loop FACP with charger, battries and auto dialer for Fire Alarm - (B7.28 46 00.01)-SWL1-B07-D16 | 4d | 2027-08-03 | 2027-08-07 | RHD4CSWL1B07D161141 SS, RHD4ENSWL1APPELE1300, RHD4PRSHLDOSLFS3000, RHD4PRSHLSTAGLFS3000, RHD4CSWL1B07D161128 |
| RHD4CSWL1B07D161146 |  | Addressable type fire alarm Photoelectric smoke detector complete for Fire Alarm - (B7.28 46 00.05)-SWL1-B07-D16 | 4d | 2027-08-08 | 2027-08-11 | RHD4CSWL1B07D161145, RHD4CZ2L102RW3002 FF, RHD4CZ4L01RD7100, RHD4CZ8L04SL1500, RHD4CZ3C011SL6100 |
| RHD4CSWL1B07D161147 |  | Addressable type fire alarm manual call station/pull station for Fire Alarm - (B7.28 46 00.06)-SWL1-B07-D16 | 3d | 2027-08-12 | 2027-08-15 | RHD4CSWL1B07D161146, RHD4CZ5RA07CCTV1500 FF, RHD4CZ3BZ3BF2001 |
| RHD4CSWL1B07D161148 |  | Conventional 24V DC fire alarm wall mounted 15cd flasher/strobe. for Fire Alarm - (B7.28 46 00.07)-SWL1-B07-D16 | 3d | 2027-08-16 | 2027-08-18 | RHD4CSWL1B07D161147, RHD4CZ8RA04CCTV6100, RHD4CZ5C061CCTV6100, RHD4CZ3C011SL1500 |
| RHD4CSWL1B07D161149 |  | Conventional 24V DC fire alarm wall mounted 15cd flasher weather proof for Fire Alarm - (B7.28 46 00.08)-SWL1-B07-D16 | 3d | 2027-08-19 | 2027-08-22 | RHD4CSWL1B07D161148, RHD4GNSLZ7FT1600, RHD4CZ7RA03CCTV1500 |
| RHD4CSWL1B07D161150 |  | Short CCT Isolator. for Fire Alarm - (B7.28 46 00.09)-SWL1-B07-D16 | 2d | 2027-08-23 | 2027-08-24 | RHD4CSWL1B07D161149, RHD4CSWL1B07D161134 SS, RHD4CZ8C014RD7100 |
|  | 61 | **RHD4-02-002-SWL1-B07-Electrical Works-Main Motor Control Center (MCC)** |  | 2027-08-23 | 2027-08-29 |  |
| RHD4CSWL1B07D161151 |  | Installation for MCC-3 - (B7.26 29 00.01)-SWL1-B07-D16 | 4d | 2027-08-23 | 2027-08-26 | RHD4CSWL1B07D161150 SS, RHD4ENSWL1APPELE1300, RHD4PRSHLDOSLFS2300, RHD4PRSHLSTAGLFS2300, RHD4CZ8RA04RD3200 |
| RHD4CSWL1B07D161152 |  | Termination for MCC-3 - (B7.26 29 00.01)-SWL1-B07-D16 | 2d | 2027-08-28 | 2027-08-29 | RHD4CSWL1B07D161151, RHD4ENSWL1APPELE1300, RHD4CSWL1B07D161134, RHD4CZ1C081CCTV1500 |
|  | 62 | **RHD4-02-002-SWL1-B07-Electrical Works-Programmable Logic Controllers** |  | 2027-08-28 | 2027-09-04 |  |
| RHD4CSWL1B07D161153 |  | PLC System Installation for - (B7.40 63 43.01)-SWL1-B07-D16 | 3d | 2027-08-28 | 2027-08-30 | RHD4CSWL1B07D161152 SS, RHD4ENSWL1APPELE1300, RHD4PRLOLSTAGLFS1700, RHD4CZ1L101CCTV1500 |

| ID | WBS | Task | Duration | Start | Finish | Predecessors |
| --- | --- | --- | --- | --- | --- | --- |
| RHD4CSWL1B07D161154 |  | Process Control Wiring Installation for - (B7.40 67 10.01)-SWL1-B07-D16 | 3d | 2027-08-28 | 2027-08-30 | RHD4CSWL1B07D161153 SS, RHD4ENSWL1APPELE1300, RHD4PRLOLSTAGLFS1700 |
| RHD4CSWL1B07D161155 |  | Instrumentation for Process Systems for - (B7.40 70 00.01)-SWL1-B07-D16 | 4d | 2027-08-31 | 2027-09-04 | RHD4CSWL1B07D161154, RHD4ENSWL1APPELE1300, RHD4PRLOLSTAGLFS1700, RHD4CZ9L05RD7100, RHD4CZ5C061RD7100, RHD4CZ5C061RD8100, RHD4CZ5RA07CCTV6100, RHD4CZ7L131RD7100 |
|  | 5 | **RHD4-02-002-Sewage Lift Station 01-Wet Well Structure And Valve Chamber** |  | 2026-12-06 | 2027-06-21 |  |
|  | 16 | **RHD4-02-002-SWL1-B07-Pump Lifting System** |  | 2027-05-13 | 2027-06-21 |  |
|  | 17 | **RHD4-02-002-SWL1-B07-Ductile Pipe Connection and Fittings-Pipes, Fittings & Appurtenances** |  | 2027-05-13 | 2027-06-03 |  |
| RHD4CSWL1B07D151027 |  | Buried ductile iron pipes with diameter 400 mm Installation - (B7.22 11 13.03)-SWL1-B07-D15 | 4d | 2027-05-13 | 2027-05-22 | RHD4PRSHLDOSLFS1700, RHD4PRSHLSTAGLFS1700, RHD4PRLOLSTAGLFS1100, RHD4CSWL1B07D151023, RHD4ENSWL1APPMEC1200, RHD4GNPPSD1100, RHD4ENSDSWL1SUB3000, RHD4ENSDZ6SUBRD220, RHD4ENSDSTL1SUB3000 |
| RHD4CSWL1B07D151029 |  | Buried ductile iron pipes with diameter 250 mm Installation - (B7.22 11 13.05)-SWL1-B07-D15 | 5d | 2027-05-23 | 2027-05-27 | RHD4CTUN1Z5STG21390, RHD4CSWL1B07D151027 |
| RHD4CSWL1B07D151030 |  | Double flanged ductile iron pipe with diameter 250 mm Installation - (B7.22 11 13.06)-SWL1-B07-D15 | 6d | 2027-05-29 | 2027-06-03 | RHD4CSWL1B07D151029 |
|  | 18 | **RHD4-02-002-SWL1-B07-Ductile Pipe Connection and Fittings-Isolation Penstock** |  | 2027-06-05 | 2027-06-16 |  |
| RHD4CSWL1B07D151031 |  | Install Electrically operated penstock 500 * 500 mm - (B7.35 21 23.01)-SWL1-B07-D15 | 11d | 2027-06-05 | 2027-06-16 | RHD4PRLOLSTAGLFS2000, RHD4PRSHLDOSLFS1700, RHD4PRSHLSTAGLFS1700, RHD4PRLOLSTAGLFS1100, RHD4CSWL1B07D151030, RHD4ENSWL1APPMEC1200, RHD4GNPPSD1100, RHD4ENSDSWL1SUB3000, RHD4ENSDZ6SUBRD220, RHD4ENSDSTL1SUB3000 |
|  | 19 | **RHD4-02-002-SWL1-B07-Ductile Pipe Connection and Fittings-JIB Crane** |  | 2027-06-17 | 2027-06-21 |  |
| RHD4CSWL1B07D151032 |  | Install JIB Crane For storm and sewer pumping Stations - (B7.41 22 10.01)-SWL1-B07-D15 | 4d | 2027-06-17 | 2027-06-21 | RHD4CSWL1B07D151031, RHD4CSWL1B07D151030, RHD4CTUN1Z5STG21380, RHD4PRLOLSTAGLFS1500, RHD4CSWL1B07D151023, RHD4PRSHLDOSLFS1800, RHD4PRSHLSTAGLFS1800, RHD4ENSWL1APPMEC1200, RHD4GNPPSD1100, RHD4ENSDSWL1SUB3000, RHD4ENSDZ6SUBRD220, RHD4ENSDSTL1SUB3000 |
|  | 6 | **RHD4-02-002-SWL1-B07-Wet Well Structure And Valve Chamber** |  | 2026-12-06 | 2027-05-12 |  |
|  | 10 | **RHD4-02-002-SWL1-B07-WET WELL-Metal Doors** |  | 2027-03-24 | 2027-03-30 |  |
| RHD4CSWL1B07D051014 |  | metal floor door size (1000x1000mm) for Wet well structure - (B7.08 31 13.04)-SWL1-B07-D05 | 6d | 2027-03-24 | 2027-03-30 | RHD4PRSHLDOSLFS1400, RHD4PRSHLSTAGLFS1400, RHD4CSWL1B07D091012, RHD4PRSHLDOSLFS1500, RHD4PRSHLSTAGLFS1500, RHD4ENSWL1APPARC1100, RHD4GNPPSD1100, RHD4ENSDSWL1SUB2000, RHD4ENSDZ6SUBRD220, RHD4ENSDSTL1SUB2000 |
|  | 11 | **RHD4-02-002-SWL1-B07-WET WELL-Screening Container** |  | 2027-03-31 | 2027-04-06 |  |
| RHD4CSWL1B07D151016 |  | Steel Container Screening Installation - (B7.46 21 00.01)-SWL1-B07-D15 | 6d | 2027-03-31 | 2027-04-06 | RHD4PRLOLSTAGLFS1000, RHD4CSWL1B07D051014, RHD4PRSHLDOSLFS1400, RHD4PRSHLSTAGLFS1400, RHD4ENSWL1APPARC1100, RHD4GNPPSD1100, RHD4ENSDSWL1SUB2000, RHD4ENSDZ6SUBRD220, RHD4ENSDSTL1SUB2000, RHD4ENSWL1APPMEC1200, RHD4ENSDSWL1SUB3000, RHD4ENSDSTL1SUB3000 |
|  | 12 | **RHD4-02-002-SWL1-B07-WET WELL-Motorized basket screen** |  | 2027-04-07 | 2027-04-21 |  |
| RHD4CSWL1B07D151017 |  | Basket Screen Frame Mounting - (B7.46 21 00.01)-SWL1-B07-D15 | 4d | 2027-04-07 | 2027-04-11 | RHD4CSWL1B07D151016, RHD4PRSHLDOSLFS1900, RHD4PRSHLSTAGLFS1900 |
| RHD4CSWL1B07D151018 |  | Basket Screen Alignment - (B7.46 21 01.01)-SWL1-B07-D15 | 5d | 2027-04-12 | 2027-04-17 | RHD4CSWL1B07D151017, RHD4PRSHLDOSLFS1900, RHD4PRSHLSTAGLFS1900 |
| RHD4CSWL1B07D151019 |  | Motor and Drive System Installation - (B7.46 21 01.01)-SWL1-B07-D15 | 4d | 2027-04-18 | 2027-04-21 | RHD4CSWL1B07D151018 |
|  | 13 | **RHD4-02-002-SWL1-B07-WET WELL-Pumps** |  | 2027-04-22 | 2027-05-03 |  |
| RHD4CSWL1B07D151021 |  | Constant Speed Submersible pump Installation - 53 lps - (B7. 22 14 29.16.02)-SWL1-B07-D15 | 10d | 2027-04-22 | 2027-05-03 | RHD4PRLOLSTAGLFS1100, RHD4CSWL1B07D151019, RHD4ENSWL1APPMEC1200, RHD4GNPPSD1100, RHD4ENSDSWL1SUB3000, RHD4ENSDZ6SUBRD220, RHD4ENSDSTL1SUB3000 |
|  | 14 | **RHD4-02-002-SWL1-B07-WET WELL-Gate Valves** |  | 2027-05-04 | 2027-05-12 |  |
| RHD4CSWL1B07D151023 |  | Manually operated Gate Valve DN250 for - (B7.22 05 23.02)-SWL1-B07-D15 | 8d | 2027-05-04 | 2027-05-12 | RHD4PRSHLDOSLFS1800, RHD4PRSHLSTAGLFS1800, RHD4CSWL1B07D151021, RHD4ENSWL1APPMEC1200, RHD4GNPPSD1100, RHD4ENSDSWL1SUB3000, RHD4ENSDZ6SUBRD220, RHD4ENSDSTL1SUB3000 |
|  | 15 | **RHD4-02-002-SWL1-B07-WET WELL-Butterfly Valve.** |  |  |  |  |
|  | 7 | **RHD4-02-002-SWL1-B07-WET WELL-Concrete works** |  | 2026-12-06 | 2027-02-10 |  |
| RHD4CSWL1B07D021002 |  | Lean Concrete for Wet well structure - (B7.03 00 00 .01)-SWL1-B07-D02 | 4d | 2026-12-06 | 2026-12-09 | RHD4ENSWL1APPSTC1000, RHD4CZ6C062SW2200, RHD4CZ2L102ST8500, RHD4CZ4A013ST3501, RHD4CZ5L07ST2500, RHD4CZ5L08ST7500, RHD4CZ5L08ST3500, RHD4CZ5L08ST3502, RHD4CZ5C061SW5200, RHD4CZ6A02SW3500, RHD4CZ6A02ST7500, RHD4CZ6A02ST1500, RHD4CZ6A02ST3500, RHD4CZ6C052ST4600, RHD4CZ6C052ST8500, RHD4CZ6A015ST4600, RHD4ENMARAPPEW100, RHD4CTUN1Z5STG31240 |
| RHD4CSWL1B07D021003 |  | Water proofing membrance for Wet well structure - (B7.07 13 13.01)-SWL1-B07-D02 | 2d | 2026-12-10 | 2026-12-12 | RHD4CSWL1B07D021002, RHD4PRSHLDOSLFS1200, RHD4PRSHLSTAGLFS1200, RHD4CZ5RA07PT3200, RHD4CZ5RA07SW2500, RHD4CZ5RA07SW3500, RHD4CZ5C051ST7500, RHD4CZ6C062ST2500 |
| RHD4CSWL1B07D021004 |  | Screed for Wet well structure - (B7.03 00 00 .04)-SWL1-B07-D02 | 4d | 2026-12-13 | 2026-12-16 | RHD4CSWL1B07D021003, RHD4CZ4A013ST1503, RHD4CZ6C052ST7500, RHD4CZ6C052ST2500 |
| RHD4CSWL1B07D021005 |  | Steel Fixing for Wet well structure - (B7.03 00 00 .05)-SWL1-B07-D02 | 8d | 2027-01-21 | 2027-01-30 | RHD4CSWL1B07D021004, RHD4ENSWL1APPSTC1000, RHD4CZ3L122ST5400, RHD4CZ4L014ST2500, RHD4CZ4C031ST8500, RHD4CZ5A014ST2500, RHD4CZ5C061SW3501, RHD4CZ5RA07PT3203, RHD4CZ5RA07PT4500, RHD4CZ5RA07PT3202, RHD4CZ6A02LV2400, RHD4CZ6C062ST7500 |
| RHD4CSWL1B07D021006 |  | Formwork for Wet well structure - (B7.03 00 00 .05)-SWL1-B07-D02 | 6d | 2027-01-31 | 2027-02-06 | RHD4CSWL1B07D021005, RHD4ENSWL1APPSTC1000, RHD4CZ1C081ST8500, RHD4CZ1C081ST3501, RHD4CZ7L015ST1402, RHD4CZ4L014ST3501, RHD4CZ4L01MV2400, RHD4CZ4L01PT4500, RHD4CZ5A014ST8500, RHD4CZ5L08PT3203, RHD4CZ5L08SW3500, RHD4CZ5C051PT3200, RHD4CZ5C051SW3500, RHD4CZ6C052SW3500, RHD4CZ6C052ST3500, RHD4CZ6C052ST3501, RHD4CZ6C062ST3501 |
| RHD4CSWL1B07D021007 |  | RC Casting for Wet well structure - (B7.03 00 00 .05)-SWL1-B07-D02 | 4d | 2027-02-07 | 2027-02-10 | RHD4CSWL1B07D021006, RHD4ENSWL1APPSTC1000, RHD4CZ1L101ST7500, RHD4CZ8L04ST1508, RHD4CZ4C031ST7500, RHD4CZ4C031ST3501, RHD4CZ4A013SL2400, RHD4CZ4L01SL2400, RHD4CZ4L01RD1100, RHD4CZ5L08SW6100, RHD4CZ5C061IRR1502, RHD4CZ5C061PT3202, RHD4CZ6A02PT4500, RHD4CZ6A02PT3200, RHD4CZ6C062IRR3200 |
|  | 8 | **RHD4-02-002-SWL1-B07-WET WELL-Retaining Walls & Slab** |  | 2027-02-11 | 2027-03-17 |  |
| RHD4CSWL1B07D021008 |  | Steel Fixing for Wet well structure - (B7.03 00 00 .07)-SWL1-B07-D02 | 8d | 2027-02-11 | 2027-02-20 | RHD4CSWL1B07D021007 |
| RHD4CSWL1B07D021009 |  | Formwork for Wet well structure - (B7.03 00 00 .07)-SWL1-B07-D02 | 5d | 2027-02-21 | 2027-02-27 | RHD4CSWL1B07D021008 |
| RHD4CSWL1B07D021010 |  | RC Casting for Wet well structure - (B7.03 00 00 .07)-SWL1-B07-D02 | 9d | 2027-02-28 | 2027-03-13 | RHD4CSWL1B07D021009 |
| RHD4CSWL1B07D021011 |  | Water protection Board membrance for Wet well structure - (B7.07 13 13.02)-SWL1-B07-D02 | 4d | 2027-03-14 | 2027-03-17 | RHD4CSWL1B07D021010, RHD4PRSHLDOSLFS1200, RHD4PRSHLSTAGLFS1200 |
|  | 9 | **RHD4-02-002-SWL1-B07-WET WELL-Finishes** |  | 2027-03-18 | 2027-03-23 |  |
| RHD4CSWL1B07D091012 |  | Epoxy Coating for Wet well structure - (B7.09 96 56.01)-SWL1-B07-D09 | 5d | 2027-03-18 | 2027-03-23 | RHD4CSWL1B07D021011, RHD4PRSHLDOSLFS1600, RHD4PRSHLSTAGLFS1600, RHD4ENSWL1APPARC1100, RHD4GNPPSD1100, RHD4ENSDSWL1SUB2000, RHD4ENSDZ6SUBRD220, RHD4ENSDSTL1SUB2000 |
|  | 63 | **RHD4-02-002-Sewage Lift Station 01-Site Works** |  | 2027-06-09 | 2027-09-18 |  |
|  | 64 | **RHD4-02-002-SWL1-B07-FENCE & GATES** |  | 2027-06-09 | 2027-06-29 |  |
|  | 65 | **RHD4-02-002-SWL1-B07-FENCE & GATES-Perimeter Fencing** |  | 2027-06-09 | 2027-06-24 |  |
| RHD4CSWL1B07D101158 |  | Chain Link Fence - North Side Installation - (B1.32 31 00.01)-SWL1-B07-D10 | 3d | 2027-06-09 | 2027-06-12 | RHD4CSWL1B07D071076, RHD4PRSHLSTAGLFS3100, RHD4ENSWL1APPARC1100, RHD4GNPPSD1100, RHD4ENSDSWL1SUB2000, RHD4ENSDZ6SUBRD220, RHD4ENSDSTL1SUB2000 |
| RHD4CSWL1B07D101159 |  | Chain Link Fence - South Side Installation - (B1.32 31 00.01)-SWL1-B07-D10 | 3d | 2027-06-13 | 2027-06-15 | RHD4CSWL1B07D101158, RHD4PRSHLSTAGLFS3100 |
| RHD4CSWL1B07D101160 |  | Chain Link Fence - West Side Installation - (B1.32 31 00.01)-SWL1-B07-D10 | 4d | 2027-06-16 | 2027-06-20 | RHD4CSWL1B07D101159, RHD4PRSHLSTAGLFS3100 |
| RHD4CSWL1B07D101161 |  | Chain Link Fence - East Side Installation - (B1.32 31 00.01)-SWL1-B07-D10 | 4d | 2027-06-21 | 2027-06-24 | RHD4CSWL1B07D101160, RHD4PRSHLSTAGLFS3100 |
|  | 66 | **RHD4-02-002-SWL1-B07-FENCE & GATES-Entrance Gates** |  | 2027-06-26 | 2027-06-29 |  |
| RHD4CSWL1B07D101162 |  | Main Entrance Gate Installation - (B1.32 31 00.01)-SWL1-B07-D10 | 4d | 2027-06-26 | 2027-06-29 | RHD4CSWL1B07D101161 |
|  | 67 | **RHD4-02-002-SWL1-B07-FLOW METER CHAMABER** |  | 2027-06-26 | 2027-09-09 |  |
|  | 68 | **RHD4-02-002-SWL1-B07-FLOW METER CHAMABER-Concrete works** |  | 2027-06-26 | 2027-07-17 |  |
| RHD4CSWL1B07D031165 |  | Lean Concrete 100mm - (B7.03 00 00 .01)-SWL1-B07-D03 | 3d | 2027-06-26 | 2027-06-28 | RHD4CSWL1B07D101162 SS |
| RHD4CSWL1B07D031166 |  | Water proofing membrance Bituminous Sheet - (B7.07 13 13.01)-SWL1-B07-D03 | 4d | 2027-06-29 | 2027-07-03 | RHD4CSWL1B07D031165, RHD4PRSHLDOSLFS1200, RHD4PRSHLSTAGLFS1200 |
| RHD4CSWL1B07D031167 |  | Screed 50mm - (B7.03 00 00 .04)-SWL1-B07-D03 | 4d | 2027-07-04 | 2027-07-07 | RHD4CSWL1B07D031166 |
| RHD4CSWL1B07D031168 |  | Steel Fixing - (B7.03 00 00 .05)-SWL1-B07-D03 | 3d | 2027-07-08 | 2027-07-11 | RHD4CSWL1B07D031167, RHD4ENSWL1APPSTC1000 |
| RHD4CSWL1B07D031169 |  | Formwork - (B7.03 00 00 .05)-SWL1-B07-D03 | 3d | 2027-07-12 | 2027-07-14 | RHD4CSWL1B07D031168, RHD4ENSWL1APPSTC1000 |
| RHD4CSWL1B07D031170 |  | RC Casting Fluid-Applied - (B7.03 00 00 .05)-SWL1-B07-D03 | 2d | 2027-07-15 | 2027-07-17 | RHD4CSWL1B07D031169, RHD4ENSWL1APPSTC1000 |
|  | 69 | **RHD4-02-002-SWL1-B07-FLOW METER CHAMABER-Retaining Walls & Slab** |  | 2027-07-18 | 2027-08-02 |  |
| RHD4CSWL1B07D031171 |  | Steel Fixing - (B7.03 00 00 .07)-SWL1-B07-D03 | 3d | 2027-07-18 | 2027-07-20 | RHD4CSWL1B07D031170, RHD4ENSWL1APPSTC1000 |
| RHD4CSWL1B07D031172 |  | Formwork - (B7.03 00 00 .07)-SWL1-B07-D03 | 3d | 2027-07-21 | 2027-07-24 | RHD4CSWL1B07D031171 |
| RHD4CSWL1B07D031173 |  | RC Casting - (B7.03 00 00 .07)-SWL1-B07-D03 | 4d | 2027-07-25 | 2027-07-28 | RHD4CSWL1B07D031172 |
| RHD4CSWL1B07D031174 |  | Water protection Board membrance Fluid-Applied - (B7.07 14 00.01)-SWL1-B07-D03 | 4d | 2027-07-29 | 2027-08-02 | RHD4CSWL1B07D031173, RHD4PRSHLDOSLFS1300, RHD4PRSHLSTAGLFS1300 |
|  | 70 | **RHD4-02-002-SWL1-B07-FLOW METER CHAMABER-Magnetic type flowmeter Installation** |  | 2027-08-03 | 2027-08-19 |  |
| RHD4CSWL1B07D151175 |  | Flow meter installation 250mm - (B7.22 05 19.02)-SWL1-B07-D15 | 3d | 2027-08-03 | 2027-08-05 | RHD4CSWL1B07D031174, RHD4PRLOLSTAGLFS1200, RHD4ENSWL1APPMEC1200, RHD4GNPPSD1100, RHD4ENSDSWL1SUB3000, RHD4ENSDZ6SUBRD220, RHD4ENSDSTL1SUB3000 |
| RHD4CSWL1B07D151176 |  | UPVC Conduits 1 inch UPVC - (B7.22 05 19.02)-SWL1-B07-D15 | 3d | 2027-08-07 | 2027-08-09 | RHD4CSWL1B07D151175 |
| RHD4CSWL1B07D151177 |  | Electrical power and cable connection - (B7.22 05 19.02)-SWL1-B07-D15 | 5d | 2027-08-10 | 2027-08-15 | RHD4CSWL1B07D151176 |
| RHD4CSWL1B07D151178 |  | Flow meter Panel Integration and connection - (B7.22 05 19.02)-SWL1-B07-D15 | 4d | 2027-08-16 | 2027-08-19 | RHD4CSWL1B07D151177 |
|  | 71 | **RHD4-02-002-SWL1-B07-FLOW METER CHAMABER-Non-Return Valve** |  | 2027-09-05 | 2027-09-09 |  |
| RHD4CSWL1B07D151180 |  | Check Valve with diameter 250mm. 250mm - (B7.22 05 24.02)-SWL1-B07-D15 | 5d | 2027-09-05 | 2027-09-09 | RHD4CSWL1B07D161155, RHD4PRSHLDOSLFS1800, RHD4PRSHLSTAGLFS1800, RHD4CSWL1B07D151178, RHD4CZ3C011LV4300, RHD4ENSWL1APPMEC1200, RHD4GNPPSD1100, RHD4ENSDSWL1SUB3000, RHD4ENSDZ6SUBRD220, RHD4ENSDSTL1SUB3000, RHD4CZ6CH6ST1130 |
|  | 72 | **RHD4-02-002-SWL1-B07-GENERATOR FOUNDATION** |  | 2027-06-09 | 2027-07-08 |  |

| ID | WBS | Task | Duration | Start | Finish | Predecessors |
| --- | --- | --- | --- | --- | --- | --- |
|  | 73 | **RHD4-02-002-SWL1-B07-GENERATOR FOUNDATION-Concrete works** |  | 2027-06-09 | 2027-07-01 |  |
| RHD4CSWL1B07D031183 |  | Lean Concrete 100mm - (B7.03 00 00 .01)-SWL1-B07-D03 | 2d | 2027-06-09 | 2027-06-10 | RHD4CSWL1B07D101158 SS |
| RHD4CSWL1B07D031184 |  | Water proofing membrance Bituminous Sheet - (B7.07 13 13.01)-SWL1-B07-D03 | 3d | 2027-06-12 | 2027-06-14 | RHD4CSWL1B07D031183, RHD4PRSHLDOSLFS1200, RHD4PRSHLSTAGLFS1200 |
| RHD4CSWL1B07D031185 |  | Screed 50mm - (B7.03 00 00 .04)-SWL1-B07-D03 | 2d | 2027-06-15 | 2027-06-16 | RHD4CSWL1B07D031184 |
| RHD4CSWL1B07D031186 |  | Steel Fixing - (B7.03 00 00 .05)-SWL1-B07-D03 | 3d | 2027-06-17 | 2027-06-20 | RHD4CSWL1B07D031185, RHD4ENSWL1APPSTC1000 |
| RHD4CSWL1B07D031187 |  | Formwork - (B7.03 00 00 .05)-SWL1-B07-D03 | 4d | 2027-06-21 | 2027-06-24 | RHD4CSWL1B07D031186, RHD4ENSWL1APPSTC1000 |
| RHD4CSWL1B07D031188 |  | RC Casting - (B7.03 00 00 .05)-SWL1-B07-D03 | 2d | 2027-06-26 | 2027-06-27 | RHD4CSWL1B07D031187 |
| RHD4CSWL1B07D031189 |  | Water protection Board membrance Fluid-Applied - (B7.07 14 00.01)-SWL1-B07-D03 | 4d | 2027-06-28 | 2027-07-01 | RHD4CSWL1B07D031188, RHD4PRSHLDOSLFS1300, RHD4PRSHLSTAGLFS1300 |
|  | 74 | **RHD4-02-002-SWL1-B07-GENERATOR FOUNDATION-Standby Diesel Generator** |  | 2027-07-03 | 2027-07-08 |  |
| RHD4CSWL1B07D151190 |  | Standby Diesel Generator Set 150 KVA - Installation 150kva - (B7.26 32 12.01)-SWL1-B07-D15 | 3d | 2027-07-03 | 2027-07-05 | RHD4CSWL1B07D031189, RHD4PRLOLSTAGLFS1600 |
| RHD4CSWL1B07D151191 |  | Automatic Transfer Switch ATS panel 300A - Installation 300A - (B7.26 32 12.02)-SWL1-B07-D15 | 3d | 2027-07-06 | 2027-07-08 | RHD4CSWL1B07D151190 |
|  | 75 | **RHD4-02-002-SWL1-B07-SURGE VESSEL** |  | 2027-07-10 | 2027-08-02 |  |
|  | 76 | **RHD4-02-002-SWL1-B07-SURGE VESSEL -Concrete works** |  | 2027-07-10 | 2027-08-02 |  |
| RHD4CSWL1B07D031194 |  | Lean Concrete 100mm - (B7.03 00 00 .01)-SWL1-B07-D03 | 2d | 2027-07-10 | 2027-07-11 | RHD4CSWL1B07D151191 |
| RHD4CSWL1B07D031195 |  | Water proofing membrance Bituminous Sheet - (B7.07 13 13.01)-SWL1-B07-D03 | 3d | 2027-07-12 | 2027-07-14 | RHD4CSWL1B07D031194, RHD4PRSHLDOSLFS1200, RHD4PRSHLSTAGLFS1200 |
| RHD4CSWL1B07D031196 |  | Screed 50mm - (B7.03 00 00 .04)-SWL1-B07-D03 | 3d | 2027-07-15 | 2027-07-18 | RHD4CSWL1B07D031195 |
| RHD4CSWL1B07D031197 |  | Steel Fixing - (B7.03 00 00 .05)-SWL1-B07-D03 | 4d | 2027-07-19 | 2027-07-22 | RHD4CSWL1B07D031196 |
| RHD4CSWL1B07D031198 |  | Formwork - (B7.03 00 00 .05)-SWL1-B07-D03 | 4d | 2027-07-24 | 2027-07-27 | RHD4CSWL1B07D031197 |
| RHD4CSWL1B07D031199 |  | RC Casting - (B7.03 00 00 .05)-SWL1-B07-D03 | 2d | 2027-07-28 | 2027-07-29 | RHD4CSWL1B07D031198 |
| RHD4CSWL1B07D031200 |  | Water protection Board membrance Fluid-Applied - (B7.07 14 00.01)-SWL1-B07-D03 | 3d | 2027-07-31 | 2027-08-02 | RHD4CSWL1B07D031199, RHD4PRSHLDOSLFS1300, RHD4PRSHLSTAGLFS1300 |
|  | 77 | **RHD4-02-002-SWL1-B07-SURGE VESSEL -Surge Tank** |  |  |  |  |
|  | 78 | **RHD4-02-002-SWL1-B07-ODOR UNIT** |  | 2027-06-09 | 2027-09-18 |  |
|  | 79 | **RHD4-02-002-SWL1-B07-ODOR UNIT-Concrete works** |  | 2027-06-09 | 2027-08-21 |  |
| RHD4CSWL1B07D031204 |  | Lean Concrete 100mm - (B7.03 00 00 .01)-SWL1-B07-D03 | 2d | 2027-06-09 | 2027-06-10 | RHD4CSWL1B07D031183 SS |
| RHD4CSWL1B07D031205 |  | Water proofing membrance Bituminous Sheet - (B7.07 13 13.01)-SWL1-B07-D03 | 3d | 2027-06-12 | 2027-06-14 | RHD4CSWL1B07D031204, RHD4PRSHLDOSLFS1200, RHD4PRSHLSTAGLFS1200 |
| RHD4CSWL1B07D031206 |  | Screed 50mm - (B7.03 00 00 .04)-SWL1-B07-D03 | 3d | 2027-08-03 | 2027-08-05 | RHD4CSWL1B07D031205, RHD4CSWL1B07D031200 |
| RHD4CSWL1B07D031207 |  | Steel Fixing - (B7.03 00 00 .05)-SWL1-B07-D03 | 4d | 2027-08-07 | 2027-08-10 | RHD4CSWL1B07D031206 |
| RHD4CSWL1B07D031208 |  | Formwork - (B7.03 00 00 .05)-SWL1-B07-D03 | 4d | 2027-08-11 | 2027-08-15 | RHD4CSWL1B07D031207 |
| RHD4CSWL1B07D031209 |  | RC Casting - (B7.03 00 00 .05)-SWL1-B07-D03 | 2d | 2027-08-16 | 2027-08-17 | RHD4CSWL1B07D031208 |
| RHD4CSWL1B07D031210 |  | Water protection Board membrance Fluid-Applied - (B7.07 14 00.01)-SWL1-B07-D03 | 3d | 2027-08-18 | 2027-08-21 | RHD4CSWL1B07D031209, RHD4PRSHLDOSLFS1300, RHD4PRSHLSTAGLFS1300 |
|  | 80 | **RHD4-02-002-SWL1-B07-ODOR UNIT-Odor Control Unit** |  | 2027-08-18 | 2027-09-18 |  |
| RHD4CSWL1B07D151211 |  | Carbon Filter Installation 1110 L/s - (B7.44 30 00.01)-SWL1-B07-D15 | 4d | 2027-08-18 | 2027-08-22 | RHD4CSWL1B07D031210 SS, RHD4PRLOLSTAGLFS1400, RHD4ENSWL1APPMEC1200, RHD4GNPPSD1100, RHD4ENSDSWL1SUB3000, RHD4ENSDZ6SUBRD220, RHD4ENSDSTL1SUB3000 |
| RHD4CSWL1B07D151212 |  | Exhaust Fans Installation - (B7.44 30 00.01)-SWL1-B07-D15 | 4d | 2027-08-23 | 2027-08-26 | RHD4CSWL1B07D151211, RHD4PRLOLSTAGLFS1400, RHD4ENSWL1APPMEC1200, RHD4GNPPSD1100, RHD4ENSDSWL1SUB3000, RHD4ENSDZ6SUBRD220, RHD4ENSDSTL1SUB3000 |
| RHD4CSWL1B07D151213 |  | Chimeny Stack Installation - (B7.44 30 00.01)-SWL1-B07-D15 | 5d | 2027-09-05 | 2027-09-09 | RHD4CSWL1B07D151212, RHD4CSWL1B07D151180 SS, RHD4PRLOLSTAGLFS1400, RHD4CSWL1B07D031210, RHD4ENSWL1APPMEC1200, RHD4GNPPSD1100, RHD4ENSDSWL1SUB3000, RHD4ENSDZ6SUBRD220, RHD4ENSDSTL1SUB3000 |
| RHD4CSWL1B07D151214 |  | Piping Connection 1110 L/s - (B7.44 30 00.01)-SWL1-B07-D15 | 7d | 2027-09-11 | 2027-09-18 | RHD4CSWL1B07D151213, RHD4PRLOLSTAGLFS1400, RHD4CZ6A015CCTV6100, RHD4ENSWL1APPMEC1200, RHD4GNPPSD1100, RHD4ENSDSWL1SUB3000, RHD4ENSDZ6SUBRD220, RHD4ENSDSTL1SUB3000 |
|  | 81 | **RHD4-02-002-SWL1-B07-CCTV INSTALLATION** |  |  |  |  |
|  | 315 | **Open Channels - CH** |  | 2027-01-03 | 2027-08-25 |  |
|  | 316 | **RHD4-02-002-Z1-Open Channels - CH-1** |  | 2027-01-03 | 2027-02-28 |  |
|  | 317 | **RHD4-02-002-Z1-Open Channel - ST** |  | 2027-01-03 | 2027-02-28 |  |
|  | 318 | **RHD4-02-002-CH1-(ST)-Open Drain Channel** |  | 2027-01-03 | 2027-02-28 |  |
| RHD4CZ1CH1ST1100 |  | Channels excavation for Open Channel - (B6.31 23 00.01)-Z1-CH1-ST | 21d | 2027-01-03 | 2027-01-26 | RHD4CZ4A013SL5200 |
| RHD4CZ1CH1ST1300 |  | Loose riprap on the channels bed for Open Channel - (B6.31 37 00.01)-Z1-CH1-ST | 12d | 2027-01-27 | 2027-02-09 | RHD4CZ1CH1ST1100 |
| RHD4CZ1CH1ST1200 |  | Grouted riprap on side slopes for Open Channel - (B6.31 37 00.02)-Z1-CH1-ST | 15d | 2027-02-10 | 2027-02-28 | RHD4PRSHLDOSST1400, RHD4PRSHLSTAGST1400, RHD4CZ1CH1ST1300 |
|  | 319 | **RHD4-02-002-Z2-Open Channels - CH-4** |  | 2027-01-27 | 2027-02-11 |  |
|  | 320 | **RHD4-02-002-Z2-Open Channel - ST** |  | 2027-01-27 | 2027-02-11 |  |
|  | 321 | **RHD4-02-002-CH4-(ST)-Open Drain Channel Part 1** |  | 2027-01-27 | 2027-02-11 |  |
| RHD4CZ2CH4ST1100 |  | Channels excavation for Open Channel - (B6.31 23 00.01)-Z2-CH4-ST | 14d | 2027-01-27 | 2027-02-11 | RHD4CZ1CH1ST1100 |
|  | 322 | **RHD4-02-002-CH4-(ST)-Open Drain Channel Part 2** |  |  |  |  |
|  | 1 | **RHD4-02-002-Z3-Open Channels - CH-3** |  | 2027-02-13 | 2027-02-25 |  |
|  | 317 | **RHD4-02-002-Z3-Open Channel - ST** |  | 2027-02-13 | 2027-02-25 |  |
|  | 318 | **RHD4-02-002-CH3-(ST)-Open Drain Channel** |  | 2027-02-13 | 2027-02-25 |  |
| RHD4CZ3CH3ST1100 |  | Channels excavation for Open Channel - (B6.31 23 00.01)-Z3-CH3-ST | 11d | 2027-02-13 | 2027-02-25 | RHD4CZ2CH4ST1100 |
|  | 3 | **RHD4-02-002-Z4-Open Channels - CH-5** |  | 2027-02-27 | 2027-06-29 |  |
|  | 320 | **RHD4-02-002-Z4-Open Channel - ST** |  | 2027-02-27 | 2027-06-29 |  |
|  | 321 | **RHD4-02-002-CH5-(ST)-Open Drain Channel Part 1** |  | 2027-02-27 | 2027-05-13 |  |
| RHD4CZ4CH5ST1100 |  | Channels excavation for Open Channel - (B6.31 23 00.01)-Z4-CH5-ST | 21d | 2027-02-27 | 2027-03-25 | RHD4CZ3CH3ST1100 |
| RHD4CZ4CH5ST1200 |  | Grouted riprap on side slopes for Open Channel - (B6.31 37 00.02)-Z4-CH5-ST | 21d | 2027-03-27 | 2027-04-19 | RHD4CZ4CH5ST1100 |
| RHD4CZ4CH5ST1300 |  | Loose riprap on the channels bed for Open Channel - (B6.31 37 00.01)-Z4-CH5-ST | 21d | 2027-04-20 | 2027-05-13 | RHD4CZ4CH5ST1200, RHD4CZ1CH1ST1200 FF |
|  | 322 | **RHD4-02-002-CH5-(ST)-Open Drain Channel Part 2** |  | 2027-03-27 | 2027-06-12 |  |
| RHD4CZ4CH5ST1110 |  | Channels excavation for Open Channel - (B6.31 23 00.01)-Z4-CH5-ST | 21d | 2027-03-27 | 2027-04-19 | RHD4CZ4CH5ST1100 |
| RHD4CZ4CH5ST1210 |  | Grouted riprap on side slopes for Open Channel - (B6.31 37 00.02)-Z4-CH5-ST | 21d | 2027-04-20 | 2027-05-13 | RHD4CZ4CH5ST1110 |
| RHD4CZ4CH5ST1310 |  | Loose riprap on the channels bed for Open Channel - (B6.31 37 00.01)-Z4-CH5-ST | 21d | 2027-05-19 | 2027-06-12 | RHD4CZ4CH5ST1210 |
|  | 1 | **RHD4-02-002-CH5-(ST)-Open Drain Channel Part 3** |  | 2027-04-20 | 2027-06-29 |  |
| RHD4CZ4CH5ST1120 |  | Channels excavation for Open Channel - (B6.31 23 00.01)-Z4-CH5-ST | 21d | 2027-04-20 | 2027-05-13 | RHD4CZ4CH5ST1110 |
| RHD4CZ4CH5ST1220 |  | Grouted riprap on side slopes for Open Channel - (B6.31 37 00.02)-Z4-CH5-ST | 21d | 2027-05-19 | 2027-06-12 | RHD4CZ4CH5ST1120 |
| RHD4CZ4CH5ST1320 |  | Loose riprap on the channels bed for Open Channel - (B6.31 37 00.01)-Z4-CH5-ST | 15d | 2027-06-13 | 2027-06-29 | RHD4CZ4CH5ST1220, RHD4CZ4CH5ST1300 FF, RHD4CZ4CH5ST1310 FF |
|  | 2 | **RHD4-02-002-Z5-Open Channels - CH-2** |  | 2027-05-19 | 2027-05-30 |  |
|  | 317 | **RHD4-02-002-Z5-Open Channel - ST** |  | 2027-05-19 | 2027-05-30 |  |
|  | 318 | **RHD4-02-002-CH2-(ST)-Open Drain Channel** |  | 2027-05-19 | 2027-05-30 |  |
| RHD4CZ5CH2ST1100 |  | Channels excavation for Open Channel - (B6.31 23 00.01)-Z5-CH2-ST | 10d | 2027-05-19 | 2027-05-30 | RHD4CZ4CH5ST1120 |

| ID | WBS | Task | Duration | Start | Finish | Predecessors |
| --- | --- | --- | --- | --- | --- | --- |
|  | 4 | **RHD4-02-002-Z6-Open Channels - CH-6** |  | 2027-05-31 | 2027-08-25 |  |
|  | 320 | **RHD4-02-002-Z6-Open Channel - ST** |  | 2027-05-31 | 2027-08-25 |  |
|  | 321 | **RHD4-02-002-CH6-(ST)-Open Drain Channel Part 1** |  | 2027-05-31 | 2027-06-22 |  |
| RHD4CZ6CH6ST1100 |  | Channels excavation for Open Channel - (B6.31 23 00.01)-Z6-CH6-ST | 20d | 2027-05-31 | 2027-06-22 | RHD4CZ5CH2ST1100 |
|  | 322 | **RHD4-02-002-CH6-(ST)-Open Drain Channel Part 2** |  | 2027-06-23 | 2027-07-15 |  |
| RHD4CZ6CH6ST1110 |  | Channels excavation for Open Channel - (B6.31 23 00.01)-Z6-CH6-ST | 20d | 2027-06-23 | 2027-07-15 | RHD4CZ6CH6ST1100 |
|  | 1 | **RHD4-02-002-CH6-(ST)-Open Drain Channel Part 3** |  | 2027-07-17 | 2027-08-08 |  |
| RHD4CZ6CH6ST1120 |  | Channels excavation for Open Channel - (B6.31 23 00.01)-Z6-CH6-ST | 20d | 2027-07-17 | 2027-08-08 | RHD4CZ6CH6ST1110 |
|  | 2 | **RHD4-02-002-CH6-(ST)-Open Drain Channel Part 4** |  | 2027-08-09 | 2027-08-25 |  |
| RHD4CZ6CH6ST1130 |  | Channels excavation for Open Channel - (B6.31 23 00.01)-Z6-CH6-ST | 15d | 2027-08-09 | 2027-08-25 | RHD4CZ6CH6ST1120 |
|  | 2 | **Provisional Sum** |  | 2028-05-20 | 2028-05-28 |  |
| A1000 |  | De-scoping | 9d | 2028-05-20 | 2028-05-28 | RHD4GNHODMOB1300 SS, RHD4HOASSTL1SUB1000, RHD4HOASSTL1SUB1100, RHD4HOASSTL1SUB1200, RHD4HOASSTL1SUB1300 |
|  | 9216 | **RHD4-02-002-Final Testing and Commissioning - FT** |  | 2026-12-28 | 2028-02-20 |  |
|  | 9217 | **RHD4-02-002-Final Testing and Commissioning - FT-Z1** |  | 2027-03-14 | 2028-01-20 |  |
| RHD4GNLVZ1FT1500 |  | Final Testing and Commissioning for Low Voltage Network - FT-Z1-LV | 30d | 2027-03-14 | 2027-04-17 | RHD4CZ1L101LV3400, RHD4CZ1C081LV3400, RHD4GNLVZ2FT1500 SS |
| RHD4GNSLZ1FT1600 |  | Final Testing and Commissioning for Street Lighting Network - FT-Z1-SL | 30d | 2027-04-11 | 2027-05-19 | RHD4CZ1L101SL3400, RHD4CZ1C081SL3400, RHD4CZ1L101SL1500, RHD4CZ1C081SL1500, RHD4CZ1C081SL4300 |
| RHD4GNCCTVZ1FT2000 |  | Final Testing and Commissioning for Security "CCTV" Network - FT-Z1-CCTV | 30d | 2027-06-23 | 2027-07-27 | RHD4CZ1L101CCTV4200, RHD4CZ1C081CCTV4200, RHD4CZ1C081CCTV1500, RHD4CZ1L101CCTV1500, RHD4CZ1L101CCTV4100, RHD4CZ1C081CCTV4100 |
| RHD4GNTCZ1FT1800 |  | Final Testing and Commissioning for Telecommunications Network - FT-Z1-TC | 30d | 2027-10-02 | 2027-11-04 | RHD4CZ1C081TC2400, RHD4CZ1L101TC2400, RHD4GNTCZ5FT1800, RHD4HOASZ5APPSL170 |
| RHD4GNICTZ1FT1900 |  | Final Testing and Commissioning for ICT Network - FT-Z1-ICT | 30d | 2027-11-06 | 2027-12-09 | RHD4CZ1C081ICT2400, RHD4CZ1L101ICT2400, RHD4GNICTZ4FT1900 SS |
| RHD4GNSTZ1FT1000 |  | Final Testing and Commissioning for Storm Network - FT-Z1-ST | 12d | 2027-11-06 | 2027-11-18 | RHD4CZ1L101ST3500, RHD4CZ1L101ST3501, RHD4CZ1L101ST7500, RHD4CZ1C081ST3501, RHD4CZ1C081ST8500, RHD4CZ1C081ST3500, RHD4CZ1C081ST7500, RHD4GNSTZ2FT1000 SS |
| RHD4GNIRRZ1FT1300 |  | Final Testing and Commissioning for Irrigation Network - FT-Z1-IRR | 30d | 2027-11-20 | 2027-12-23 | RHD4CZ1C081IRR1404, RHD4CZ1C081IRR3200, RHD4CZ1L101IRR1404, RHD4CZ1L101IRR3200, RHD4GNIRRZ8FT1300 SS |
| RHD4GNMVZ1FT1400 |  | Final Testing and Commissioning for Medium Voltage Network - FT-Z1-MV | 30d | 2027-11-20 | 2027-12-23 | RHD4CZ1C081MV3300, RHD4CZ1C081MV3400, RHD4CZ1C081MV3401, RHD4CZ1L101MV3300, RHD4GNMVZ4FT1400 SS |
| RHD4GNPTZ1FT1200 |  | Final Testing and Commissioning for Potable Water Network - FT-Z1-PT | 30d | 2027-11-20 | 2027-12-23 | RHD4CZ1C081PT1402, RHD4CZ1C081PT4500, RHD4CZ1C081PT3203, RHD4CZ1C081PT3200, RHD4CZ1C081PT4300, RHD4CZ1C081PT4200, RHD4CZ1L101PT1400, RHD4CZ1L101PT1401, RHD4GNPTZ6FT1200 SS |
| RHD4GNSWZ1FT1100 |  | Final Testing and Commissioning for Sewage Network - FT-Z1-SW | 30d | 2027-12-18 | 2028-01-20 | RHD4CZ1C081SW2400, RHD4CZ1C081SW3400, RHD4CZ1L101SW3400, RHD4CZ1L101SW2400, RHD4CZ1C081SW3500, RHD4GNSWZ2FT1100 SS |
|  | 9218 | **RHD4-02-002-Final Testing and Commissioning - FT-Z2** |  | 2026-12-28 | 2027-12-30 |  |
| RHD4GNLVZ2FT1500 |  | Final Testing and Commissioning for Low Voltage Network - FT-Z2-LV | 30d | 2026-12-28 | 2027-01-31 | RHD4CZ2L011LV3400 |
| RHD4GNSLZ2FT1600 |  | Final Testing and Commissioning for Street Lighting Network - FT-Z2-SL | 30d | 2027-04-25 | 2027-06-02 | RHD4CZ2C082SL6100, RHD4CZ2L102SL6100, RHD4CZ2C082SL1500, RHD4CZ2L102SL1500, RHD4CZ2L011SL1500, RHD4CZ2C082SL3400, RHD4CZ2L102SL3400, RHD4CZ2L011SL3400, RHD4GNLVZ1FT1500 |
| RHD4GNCCTVZ2FT2000 |  | Final Testing and Commissioning for Security "CCTV" Network - FT-Z2-CCTV | 30d | 2027-08-29 | 2027-10-03 | RHD4CZ2C082CCTV1500, RHD4CZ2L102CCTV1500, RHD4CZ2C082CCTV4200, RHD4CZ2L102CCTV4200, RHD4CZ2C082CCTV4100, RHD4CZ2L102CCTV4100, RHD4CZ3C011CCTV2100, RHD4GNCCTVZ4FT2000 SS |
| RHD4GNICTZ2FT1900 |  | Final Testing and Commissioning for ICT Network - FT-Z2-ICT | 22d | 2027-11-06 | 2027-11-30 | RHD4CZ2C082ICT2400, RHD4CZ2L102ICT2400, RHD4CZ2L011ICT2400, RHD4GNICTZ4FT1900 SS |
| RHD4GNSTZ2FT1000 |  | Final Testing and Commissioning for Storm Network - FT-Z2-ST | 12d | 2027-11-06 | 2027-11-18 | RHD4CZ2L102ST1406, RHD4CZ2C082ST1400, RHD4CZ2L102ST1400, RHD4CZ2L011ST1400, RHD4CZ2C082ST1401, RHD4CZ2C082ST1402, RHD4CZ2L102ST1402, RHD4CZ2C082ST1403, RHD4CZ2L102ST1403, RHD4CZ2L102ST1404, RHD4CZ2L102ST1405, RHD4CZ2C082ST2400, RHD4CZ2L102ST2400, RHD4CZ2L011ST2400, RHD4CZ2C082ST8400, RHD4CZ2L102ST8400, RHD4CZ2C082ST3400, RHD4CZ2L102ST3400, RHD4CZ2L011ST3400, RHD4CZ2C082ST3401, RHD4CZ2L102ST3401, RHD4CZ2L102ST3402, RHD4CZ2C082ST7400, RHD4CZ2L102ST7400, RHD4CZ2L011ST7400, RHD4CZ2C082ST8500, RHD4CZ2L102ST8500, RHD4CZ2C082ST7500, RHD4CZ2L102ST7500, RHD4CZ2L011ST7500, RHD4CZ2C082ST3500, RHD4CZ2L102ST3500, RHD4CZ2L011ST3500, RHD4CZ2C082ST3501, RHD4CZ2L102ST3501, RHD4CZ2L102ST3502, RHD4CZ2C082ST4600, RHD4CZ2L102ST4600, RHD4GNTCZ1FT1800 |
| RHD4GNTCZ2FT1800 |  | Final Testing and Commissioning for Telecommunications Network - FT-Z2-TC | 30d | 2027-11-06 | 2027-12-09 | RHD4CZ2C082TC2400, RHD4CZ2L102TC2400, RHD4CZ2L011TC2400, RHD4GNTCZ8FT1800, RHD4GNTCZ1FT1800 |
| RHD4GNIRRZ2FT1300 |  | Final Testing and Commissioning for Irrigation Network - FT-Z2-IRR | 30d | 2027-11-20 | 2027-12-23 | RHD4CZ2C082IRR1404, RHD4CZ2L102IRR1404, RHD4CZ2C082IRR3200, RHD4CZ2L102IRR3200, RHD4GNIRRZ8FT1300 SS |
| RHD4GNMVZ2FT1400 |  | Final Testing and Commissioning for Medium Voltage Network - FT-Z2-MV | 30d | 2027-11-20 | 2027-12-23 | RHD4CZ2L102MV4200, RHD4CZ2L102MV3401, RHD4CZ2L102MV3400, RHD4CZ2L102MV3300, RHD4CZ2L011MV3300, RHD4GNMVZ4FT1400 SS |
| RHD4GNPTZ2FT1200 |  | Final Testing and Commissioning for Potable Water Network - FT-Z2-PT | 30d | 2027-11-20 | 2027-12-23 | RHD4CZ2C082PT4400, RHD4CZ2L102PT4400, RHD4CZ2L011PT4400, RHD4CZ2L102PT1400, RHD4CZ2L102PT1401, RHD4CZ2L011PT1401, RHD4CZ2C082PT1402, RHD4CZ2C082PT4500, RHD4CZ2L102PT4500, RHD4CZ2L011PT4500, RHD4CZ2C082PT3203, RHD4CZ2L102PT3203, RHD4CZ2L011PT3203, RHD4CZ2C082PT3200, RHD4CZ2L102PT3200, RHD4CZ2L011PT3200, RHD4CZ2C082PT3202, RHD4CZ2L102PT3202, RHD4CZ2C082PT4300, RHD4CZ2L102PT4300, RHD4CZ2L011PT4300, RHD4CZ2C082PT4200, RHD4CZ2L102PT4200, RHD4CZ2L011PT4200, RHD4GNPTZ6FT1200 SS |
| RHD4GNSWZ2FT1100 |  | Final Testing and Commissioning for Sewage Network - FT-Z2-SW | 12d | 2027-12-18 | 2027-12-30 | RHD4CZ2L102SW3500, RHD4CZ2L102SW2400, RHD4CZ2L102SW3400, RHD4GNSWZ3FT1100 SS |
|  | 9219 | **RHD4-02-002-Final Testing and Commissioning - FT-Z3** |  | 2027-05-25 | 2028-02-20 |  |
| RHD4GNLVZ3FT1500 |  | Final Testing and Commissioning for Low Voltage Network - FT-Z3-LV | 15d | 2027-05-25 | 2027-06-10 | RHD4CZ3C011LV3400, RHD4CZ3C083LV3400, RHD4CZ3L122LV3400, RHD4CZ3C011LV4300, RHD4CZ3L122LV4300, RHD4GNLVZ2FT1500 SS, RHD4CZ3L122LV5200 |
| RHD4GNSTZ3FT1000 |  | Final Testing and Commissioning for Storm Network - FT-Z3-ST | 12d | 2027-11-06 | 2027-11-18 | RHD4CZ3L122ST8500, RHD4CZ3C083ST7500, RHD4CZ3L122ST7500, RHD4CZ3C083ST3500, RHD4CZ3L122ST3500, RHD4CZ3L122ST3501, RHD4CZ3L122ST3502, RHD4CZ3C083ST1400, RHD4CZ3L122ST1400, RHD4CZ3L122ST1404, RHD4CZ3C083ST2400, RHD4CZ3L122ST2400, RHD4CZ3L122ST8400, RHD4CZ3C083ST3400, RHD4CZ3L122ST3400, RHD4CZ3L122ST3401, RHD4CZ3L122ST3402, RHD4CZ3C083ST7400, RHD4CZ3L122ST7400, RHD4GNSTZ2FT1000 SS |
| RHD4GNIRRZ3FT1300 |  | Final Testing and Commissioning for Irrigation Network - FT-Z3-IRR | 30d | 2027-11-20 | 2027-12-23 | RHD4CZ3L122IRR1400, RHD4CZ3C083IRR1404, RHD4CZ3L122IRR1404, RHD4CZ3C011IRR3203, RHD4CZ3L122IRR3200, RHD4CZ3L122IRR3202, RHD4GNIRRZ8FT1300 SS |
| RHD4GNMVZ3FT1400 |  | Final Testing and Commissioning for Medium Voltage Network - FT-Z3-MV | 30d | 2027-11-20 | 2027-12-23 | RHD4CZ3C011MV4200, RHD4CZ3C011MV3401, RHD4CZ3L122MV3401, RHD4CZ3C011MV3400, RHD4CZ3L122MV3400, RHD4CZ3C011MV3301, RHD4CZ3L122MV3301, RHD4CZ3C011MV3300, RHD4CZ3L122MV3300, RHD4CZ3C011MV5400, RHD4CZ3L122MV5400, RHD4GNMVZ4FT1400 SS |
| RHD4GNPTZ3FT1200 |  | Final Testing and Commissioning for Potable Water Network - FT-Z3-PT | 30d | 2027-11-20 | 2027-12-23 | RHD4CZ3C011PT3201, RHD4CZ3C011PT3202, RHD4CZ3C011PT3203, RHD4CZ3C011PT4300, RHD4CZ3C011PT4500, RHD4CZ3C011PT1403, RHD4CZ3C083PT1403, RHD4CZ3L122PT1403, RHD4CZ3C011PT1404, RHD4CZ3C011PT4500 FF, RHD4CZ3C083PT4500, RHD4CZ3L122PT4500, RHD4CZ3C011PT3203 FF, RHD4CZ3C083PT3203, RHD4CZ3L122PT3203, RHD4CZ3C011PT3201 FF, RHD4CZ3C011PT3202 FF, RHD4CZ3L122PT3202, RHD4CZ3C011PT4300 FF, RHD4CZ3C083PT4300, RHD4CZ3L122PT4300, RHD4GNPTZ6FT1200 SS |
| RHD4GNTCZ3FT1800 |  | Final Testing and Commissioning for Telecommunications Network - FT-Z3-TC | 30d | 2027-12-02 | 2028-01-05 | RHD4CZ3C011TC2400, RHD4CZ3C083TC2400, RHD4CZ3L122TC2400, RHD4GNTCZ9FT1800 |
| RHD4GNSLZ3FT1600 |  | Final Testing and Commissioning for Street Lighting Network - FT-Z3-SL | 30d | 2027-12-12 | 2028-01-15 | RHD4CZ3C011SL3400, RHD4CZ3C083SL3400, RHD4CZ3L122SL3400, RHD4CZ3C011SL1500, RHD4CZ3C083SL1500, RHD4CZ3L122SL1500, RHD4CZ3C011SL6100, RHD4CZ3C083SL6100, RHD4CZ3L122SL6100, RHD4CZ3C011SL4300, RHD4CZ3C083SL4300, RHD4GNICTZ2FT1900, RHD4GNICTZ7FT1900, RHD4GNICTZ8FT1900 |
| RHD4GNCCTVZ3FT2000 |  | Final Testing and Commissioning for Security "CCTV" Network - FT-Z3-CCTV | 30d | 2027-12-13 | 2028-01-16 | RHD4CZ3C083CCTV4100, RHD4CZ3L122CCTV4100, RHD4CZ3C083CCTV1500, RHD4CZ3L122CCTV1500, RHD4CZ3C083CCTV4200, RHD4CZ3L122CCTV4200, RHD4CZ3C083CCTV6100, RHD4CZ3L122CCTV6100, RHD4CZ3C083CCTV1400, RHD4CZ3L122CCTV1400, RHD4GNCCTVZ4FT2000 SS |
| RHD4GNSWZ3FT1100 |  | Final Testing and Commissioning for Sewage Network - FT-Z3-SW | 12d | 2027-12-18 | 2027-12-30 | RHD4GNSWZ9FT1100 |
| RHD4GNICTZ3FT1900 |  | Final Testing and Commissioning for ICT Network - FT-Z3-ICT | 30d | 2028-01-17 | 2028-02-20 | RHD4CZ3C011ICT2400, RHD4CZ3C083ICT2400, RHD4CZ3L122ICT2400, RHD4GNICTZ4FT1900 SS, RHD4GNCCTVZ3FT2000 |
|  | 9220 | **RHD4-02-002-Final Testing and Commissioning - FT-Z4** |  | 2027-04-13 | 2027-12-23 |  |
| RHD4GNLVZ4FT1500 |  | Final Testing and Commissioning for Low Voltage Network - FT-Z4-LV | 30d | 2027-04-13 | 2027-05-22 | RHD4CZ4C012LV3400, RHD4CZ4C031LV3400, RHD4CZ4L014LV3400, RHD4CZ4L09LV3400, RHD4CZ4L09LV4300, RHD4GNLVZ2FT1500 SS, RHD4CZ4A013LV5200 |
| RHD4GNSLZ4FT1600 |  | Final Testing and Commissioning for Street Lighting Network - FT-Z4-SL | 30d | 2027-05-20 | 2027-06-23 | RHD4CZ4A013SL3400, RHD4CZ4C012SL3400, RHD4CZ4C031SL3400, RHD4CZ4L014SL3400, RHD4CZ4L09SL3400, RHD4CZ4RA02SL3400, RHD4CZ4A013SL1500, RHD4CZ4C012SL1500, RHD4CZ4C031SL1500, RHD4CZ4L014SL1500, RHD4CZ4L09SL1500, RHD4CZ4RA02SL1500, RHD4CZ4A013SL6100, RHD4CZ4C031SL6100, RHD4CZ4L014SL6100, RHD4CZ4L09SL6100, RHD4CZ4L014SL5200, RHD4CZ4L09SL5200 |
| RHD4GNTCZ4FT1800 |  | Final Testing and Commissioning for Telecommunications Network - FT-Z4-TC | 30d | 2027-06-10 | 2027-07-14 | RHD4CZ4A013TC2400, RHD4CZ4C012TC2400, RHD4CZ4C031TC2400, RHD4CZ4L014TC2400, RHD4CZ4L09TC2400, RHD4GNLVZ4FT1500 |
| RHD4GNCCTVZ4FT2000 |  | Final Testing and Commissioning for Security "CCTV" Network - FT-Z4-CCTV | 30d | 2027-07-06 | 2027-08-09 | RHD4CZ4C031CCTV1500, RHD4CZ4L014CCTV1500, RHD4CZ4C031CCTV4200, RHD4CZ4C031CCTV4100, RHD4CZ4L014CCTV4100, RHD4CZ4RA02CCTV2100 |
| RHD4GNICTZ4FT1900 |  | Final Testing and Commissioning for ICT Network - FT-Z4-ICT | 30d | 2027-11-06 | 2027-12-09 | RHD4CZ4A013ICT2400, RHD4CZ4C012ICT2400, RHD4CZ4C031ICT2400, RHD4CZ4L014ICT2400, RHD4CZ4L09ICT2400, RHD4GNTCZ1FT1800 |
| RHD4GNSTZ4FT1000 |  | Final Testing and Commissioning for Storm Network - FT-Z4-ST | 12d | 2027-11-06 | 2027-11-18 | RHD4CZ4A013ST8500, RHD4CZ4L014ST8500, RHD4CZ4A013ST7500, RHD4CZ4C031ST7500, RHD4CZ4L014ST7500, RHD4CZ4L09ST7500, RHD4CZ4C031ST3500, RHD4CZ4L014ST3500, RHD4CZ4L09ST3500, RHD4CZ4A013ST3501, RHD4CZ4C031ST3501, RHD4CZ4L014ST3501, RHD4CZ4L09ST3501, RHD4CZ4A013ST3502, RHD4CZ4L014ST3502, RHD4CZ4A013ST1406, RHD4CZ4L014ST1406, RHD4CZ4A013ST1407, RHD4CZ4L014ST1407, RHD4CZ4A013ST1408, RHD4CZ4C031ST1400, RHD4CZ4L014ST1400, RHD4CZ4L014ST1401, RHD4CZ4L09ST1402, RHD4CZ4A013ST1403, RHD4CZ4L09ST1403, RHD4CZ4L09ST1404, RHD4CZ4A013ST1405, RHD4CZ4C031ST1405, RHD4CZ4L014ST1405, RHD4CZ4L09ST1405, RHD4CZ4A013ST2400, RHD4CZ4C031ST2400, RHD4CZ4L014ST2400, RHD4CZ4L09ST2400, RHD4CZ4A013ST8400, RHD4CZ4L014ST8400, RHD4CZ4C031ST3400, RHD4CZ4L014ST3400, RHD4CZ4L09ST3400, RHD4CZ4A013ST3401, RHD4CZ4C031ST3401, RHD4CZ4L014ST3401, RHD4CZ4L09ST3401, RHD4CZ4A013ST3402, RHD4CZ4L014ST3402, RHD4CZ4A013ST7400, RHD4CZ4C031ST7400, RHD4CZ4L014ST7400, RHD4CZ4L09ST7400, RHD4GNSTZ2FT1000 SS |
| RHD4GNSWZ4FT1100 |  | Final Testing and Commissioning for Sewage Network - FT-Z4-SW | 12d | 2027-11-06 | 2027-11-18 | RHD4CZ4L09SW3500, RHD4CZ4L014SW2400, RHD4CZ4L09SW2400, RHD4CZ4L09SW3400, RHD4GNSTZ1FT1000 SS |
| RHD4GNIRRZ4FT1300 |  | Final Testing and Commissioning for Irrigation Network - FT-Z4-IRR | 30d | 2027-11-20 | 2027-12-23 | RHD4CZ4L014IRR1400, RHD4CZ4L09IRR1400, RHD4CZ4A013IRR1403, RHD4CZ4L014IRR1403, RHD4CZ4L014IRR3200, RHD4CZ4L09IRR3200, RHD4CZ4L09IRR3202, RHD4GNIRRZ8FT1300 SS, RHD4CZ4CH5ST1320 |
| RHD4GNMVZ4FT1400 |  | Final Testing and Commissioning for Medium Voltage Network - FT-Z4-MV | 30d | 2027-11-20 | 2027-12-23 | RHD4CZ4L014MV4200, RHD4CZ4L09MV4200, RHD4CZ4L014MV3401, RHD4CZ4L09MV3401, RHD4CZ4L014MV3400, RHD4CZ4L09MV3400, RHD4CZ4L014MV3301, RHD4CZ4L09MV3301, RHD4CZ4A013MV3300, RHD4CZ4C012MV3300, RHD4CZ4C031MV3300, RHD4CZ4L014MV3300, RHD4CZ4L09MV3300, RHD4CZ4L014MV5400, RHD4CZ4L09MV5400, RHD4GNLVZ2FT1500 SS, RHD4GNSTZ4FT1000 |
| RHD4GNPTZ4FT1200 |  | Final Testing and Commissioning for Potable Water Network - FT-Z4-PT | 30d | 2027-11-20 | 2027-12-23 | RHD4CZ4A013PT4400, RHD4CZ4C031PT4400, RHD4CZ4L014PT4400, RHD4CZ4L09PT4400, RHD4CZ4L014PT1400, RHD4CZ4L09PT1400, RHD4CZ4L014PT1401, RHD4CZ4L09PT1401, RHD4CZ4A013PT1403, RHD4CZ4C031PT1403, RHD4CZ4L09PT1403, RHD4CZ4A013PT4500, RHD4CZ4C031PT4500, RHD4CZ4L014PT4500, RHD4CZ4L09PT4500, RHD4CZ4A013PT3203, RHD4CZ4L014PT3203, RHD4CZ4L09PT3203, RHD4CZ4A013PT3201, RHD4CZ4C031PT3201, RHD4CZ4L014PT3200, RHD4CZ4L09PT3200, RHD4CZ4A013PT3202, RHD4CZ4L014PT3202, RHD4CZ4A013PT4300, RHD4CZ4C031PT4300, RHD4CZ4L014PT4300, RHD4CZ4L09PT4300, RHD4GNPTZ6FT1200 SS |
|  | 9221 | **RHD4-02-002-Final Testing and Commissioning - FT-Z5** |  | 2027-04-01 | 2027-12-23 |  |
| RHD4GNLVZ5FT1500 |  | Final Testing and Commissioning for Low Voltage Network - FT-Z5-LV | 30d | 2027-04-01 | 2027-05-05 | RHD4CZ5C051LV3400, RHD4CZ5C061LV3400, RHD4CZ5L016LV3400, RHD4CZ5L07LV3400, RHD4CZ5L08LV3400, RHD4CZ5RA07LV3400, RHD4CZ5C061LV4300, RHD4CZ5L07LV4300, RHD4CZ5RA07LV4300, RHD4GNLVZ2FT1500 SS |
| RHD4GNSLZ5FT1600 |  | Final Testing and Commissioning for Street Lighting Network - FT-Z5-SL | 30d | 2027-07-10 | 2027-08-12 | RHD4CZ5A014SL6100, RHD4CZ5C051SL6100, RHD4CZ5C061SL6100, RHD4CZ5L016SL6100, RHD4CZ5L07SL6100, RHD4CZ5RA07SL6100, RHD4CZ5A014SL1500, RHD4CZ5C051SL1500, RHD4CZ5C061SL1500, RHD4CZ5L016SL1500, RHD4CZ5L07SL1500, RHD4CZ5L08SL1500, RHD4CZ5RA07SL1500, RHD4CZ5A014SL3400, RHD4CZ5C051SL3400, RHD4CZ5C061SL3400, RHD4CZ5L016SL3400, RHD4CZ5L07SL3400, RHD4CZ5L08SL3400, RHD4CZ5RA07SL3400, RHD4CZ5L07SL2400 |
| RHD4GNTCZ5FT1800 |  | Final Testing and Commissioning for Telecommunications Network - FT-Z5-TC | 30d | 2027-08-26 | 2027-09-30 | RHD4CZ5A014TC2400, RHD4CZ5C051TC2400, RHD4CZ5C061TC2400, RHD4CZ5L016TC2400, RHD4CZ5L07TC2400, RHD4CZ5L08TC2400, RHD4CZ5RA07TC2400, RHD4GNTCZ4FT1800, RHD4CZ5C051TC3400, RHD4GNSLZ5FT1600, RHD4GNCCTVZ4FT2000 |
| RHD4GNICTZ5FT1900 |  | Final Testing and Commissioning for ICT Network - FT-Z5-ICT | 30d | 2027-11-06 | 2027-12-09 | RHD4CZ5A014ICT2400, RHD4CZ5C051ICT2400, RHD4CZ5C061ICT2400, RHD4CZ5L016ICT2400, RHD4CZ5L07ICT2400, RHD4CZ5L08ICT2400, RHD4CZ5RA07ICT2400, RHD4GNICTZ4FT1900 SS, RHD4CZ5C061ICT3400 |
| RHD4GNSTZ5FT1000 |  | Final Testing and Commissioning for Storm Network - FT-Z5-ST | 12d | 2027-11-06 | 2027-11-18 | RHD4CZ5A014ST8500, RHD4CZ5L07ST8500, RHD4CZ5A014ST7500, RHD4CZ5C051ST7500, RHD4CZ5C061ST7500, RHD4CZ5L016ST7500, RHD4CZ5L07ST7500, RHD4CZ5L08ST7500, RHD4CZ5A014ST3500, RHD4CZ5C051ST3500, RHD4CZ5L016ST3500, RHD4CZ5L07ST3500, RHD4CZ5L08ST3500, RHD4CZ5A014ST3501, RHD4CZ5C051ST3501, RHD4CZ5C061ST3501, RHD4CZ5L016ST3501, RHD4CZ5L07ST3501, RHD4CZ5A014ST3502, RHD4CZ5L016ST3502, RHD4CZ5L07ST3502, RHD4CZ5L08ST3502, RHD4CZ5L07ST1406, RHD4CZ5L07ST1407, RHD4CZ5L07ST1408, RHD4CZ5A014ST1411, RHD4CZ5A014ST1400, RHD4CZ5L08ST1400, RHD4CZ5A014ST1401, RHD4CZ5L07ST1401, RHD4CZ5L08ST1401, RHD4CZ5A014ST1402, RHD4CZ5C051ST1402, RHD4CZ5L07ST1402, RHD4CZ5A014ST1403, RHD4CZ5C051ST1403, RHD4CZ5L016ST1403, RHD4CZ5L07ST1403, RHD4CZ5C061ST1404, RHD4CZ5A014ST9400, RHD4CZ5A014ST2400, RHD4CZ5C051ST2400, RHD4CZ5C061ST2400, RHD4CZ5L016ST2400, RHD4CZ5L07ST2400, RHD4CZ5L08ST2400, RHD4CZ5A014ST2401, RHD4CZ5L07ST2401, RHD4CZ5A014ST8400, RHD4CZ5L07ST8400, RHD4CZ5A014ST3400, RHD4CZ5C051ST3400, RHD4CZ5L016ST3400, RHD4CZ5L07ST3400, RHD4CZ5L08ST3400, RHD4CZ5A014ST3401, RHD4CZ5C051ST3401, RHD4CZ5C061ST3401, RHD4CZ5L016ST3401, RHD4CZ5L07ST3401, RHD4CZ5A014ST3402, RHD4CZ5L016ST3402, RHD4CZ5L07ST3402, RHD4CZ5L08ST3402, RHD4CZ5A014ST7400, RHD4CZ5C051ST7400, RHD4CZ5C061ST7400, RHD4CZ5L016ST7400, RHD4CZ5L07ST7400, RHD4CZ5L08ST7400, RHD4CZ5L08ST4500, RHD4CZ5L08ST4600, RHD4GNSTZ2FT1000 SS, RHD4CTUN1Z5STG21380, RHD4CTUN1Z5STG21900, RHD4CTUN1Z5STG21170 |
| RHD4GNCCTVZ5FT2000 |  | Final Testing and Commissioning for Security "CCTV" Network - FT-Z5-CCTV | 30d | 2027-11-17 | 2027-12-21 | RHD4CZ5C061CCTV1500, RHD4CZ5L016CCTV1500, RHD4CZ5L07CCTV1500, RHD4CZ5RA07CCTV1500, RHD4CZ5C061CCTV4200, RHD4CZ5L016CCTV4200, RHD4CZ5L07CCTV4200, RHD4CZ5RA07CCTV4200, RHD4CZ5C061CCTV4100, RHD4CZ5L016CCTV4100, RHD4CZ5L07CCTV4100, RHD4CZ5RA07CCTV4100, RHD4CZ5C051CCTV2100, RHD4CZ5RA07CCTV6100, RHD4CZ5C061CCTV6100, RHD4GNCCTVZ4FT2000 SS, RHD4CZ5L07CCTV6100, RHD4CZ1C081DM2000 |
| RHD4GNIRRZ5FT1300 |  | Final Testing and Commissioning for Irrigation Network - FT-Z5-IRR | 30d | 2027-11-20 | 2027-12-23 | RHD4CZ5C051IRR1400, RHD4CZ5L07IRR1400, RHD4CZ5L08IRR1400, RHD4CZ5C061IRR1402, RHD4CZ5L016IRR1402, RHD4CZ5L08IRR1402, RHD4CZ5RA07IRR1402, RHD4CZ5A014IRR1403, RHD4CZ5L016IRR1404, RHD4CZ5C051IRR3203, RHD4CZ5C051IRR3200, RHD4CZ5L07IRR3200, RHD4CZ5L08IRR3200, RHD4CZ5RA07IRR3200, RHD4CZ5C051IRR3202, RHD4CZ5L07IRR3202, RHD4CZ5RA07IRR3202, RHD4GNIRRZ8FT1300 SS |
| RHD4GNMVZ5FT1400 |  | Final Testing and Commissioning for Medium Voltage Network - FT-Z5-MV | 30d | 2027-11-20 | 2027-12-23 | RHD4CZ5C061MV5400, RHD4CZ5RA07MV5400, RHD4CZ5A014MV4200, RHD4CZ5L08MV4200, RHD4CZ5A014MV3401, RHD4CZ5C061MV3401, RHD4CZ5L08MV3401, RHD4CZ5RA07MV3401, RHD4CZ5A014MV3400, RHD4CZ5C061MV3400, RHD4CZ5L08MV3400, RHD4CZ5RA07MV3400, RHD4CZ5C061MV3301, RHD4CZ5RA07MV3301, RHD4CZ5A014MV3300, RHD4CZ5C051MV3300, RHD4CZ5C061MV3300, RHD4CZ5L016MV3300, RHD4CZ5L07MV3300, RHD4CZ5L08MV3300, RHD4CZ5RA07MV3300, RHD4GNMVZ4FT1400 SS, RHD4CZ5L016MV3401 |
| RHD4GNPTZ5FT1200 |  | Final Testing and Commissioning for Potable Water Network - FT-Z5-PT | 30d | 2027-11-20 | 2027-12-23 | RHD4CZ5A014PT4400, RHD4CZ5L016PT4400, RHD4CZ5L07PT4400, RHD4CZ5L08PT4400, RHD4CZ5C051PT1400, RHD4CZ5L016PT1400, RHD4CZ5L08PT1400, RHD4CZ5C051PT1401, RHD4CZ5C061PT1401, RHD4CZ5L016PT1401, RHD4CZ5L07PT1401, RHD4CZ5L08PT1401, RHD4CZ5RA07PT1401, RHD4CZ5A014PT1402, RHD4CZ5L016PT1402, RHD4CZ5L07PT1403, RHD4CZ5A014PT4500, RHD4CZ5L016PT4500, RHD4CZ5L07PT4500, RHD4CZ5L08PT4500, RHD4CZ5A014PT3203, RHD4CZ5L07PT3203, RHD4CZ5L08PT3203, RHD4CZ5L07PT3201, RHD4CZ5C051PT3200, RHD4CZ5C061PT3200, RHD4CZ5L016PT3200, RHD4CZ5L07PT3200, RHD4CZ5L08PT3200, RHD4CZ5RA07PT3200, RHD4CZ5A014PT3202, RHD4CZ5C061PT3202, RHD4CZ5L016PT3202, RHD4CZ5L07PT3202, RHD4CZ5RA07PT3202, RHD4CZ5A014PT4300, RHD4CZ5L016PT4300, RHD4CZ5L07PT4300, RHD4CZ5L08PT4300, RHD4CZ5A014PT4200, RHD4CZ5L016PT4200, RHD4CZ5L07PT4200, RHD4CZ5L08PT4200, RHD4GNPTZ6FT1200 SS |
| RHD4GNSWZ5FT1100 |  | Final Testing and Commissioning for Sewage Network - FT-Z5-SW | 12d | 2027-11-20 | 2027-12-02 | RHD4CZ5C061SW3500, RHD4CZ5C061SW3501, RHD4CZ5L016SW3500, RHD4CZ5L07SW3500, RHD4CZ5L08SW3500, RHD4CZ5RA07SW3500, RHD4CZ5C061SW1400, RHD4CZ5L016SW1400, RHD4CZ5L08SW1400, RHD4CZ5C061SW1401, RHD4CZ5L08SW2900, RHD4CZ5A014SW2400, RHD4CZ5C051SW2400, RHD4CZ5C061SW2400, RHD4CZ5L016SW2400, RHD4CZ5L07SW2400, RHD4CZ5L08SW2400, RHD4CZ5RA07SW2400, RHD4CZ5C061SW3400, RHD4CZ5C061SW3401, RHD4CZ5L016SW3400, RHD4CZ5L07SW3400, RHD4CZ5L08SW3400, RHD4CZ5RA07SW3400, RHD4GNSWZ4FT1100, RHD4CZ5L08SW6100 |
|  | 9222 | **RHD4-02-002-Final Testing and Commissioning - FT-Z6** |  | 2027-03-15 | 2027-12-23 |  |
| RHD4GNLVZ6FT1500 |  | Final Testing and Commissioning for Low Voltage Network - FT-Z6-LV | 30d | 2027-03-15 | 2027-04-18 | RHD4CZ6A015LV3400, RHD4CZ6A02LV3400, RHD4CZ6C052LV3400, RHD4CZ6C062LV3400, RHD4GNLVZ2FT1500 SS |

| ID | WBS | Task | Duration | Start | Finish | Predecessors |
| --- | --- | --- | --- | --- | --- | --- |
| RHD4GNSLZ6FT1600 |  | Final Testing and Commissioning for Street Lighting Network - FT-Z6-SL | 30d | 2027-04-12 | 2027-05-20 | RHD4CZ6A015SL6100, RHD4CZ6A02SL6100, RHD4CZ6C052SL6100, RHD4CZ6C062SL6100, RHD4CZ6A015SL3400, RHD4CZ6A02SL3400, RHD4CZ6C052SL3400, RHD4CZ6C062SL3400, RHD4CZ6RA01SL3400, RHD4CZ6C062SL1500, RHD4CZ6A015SL1500, RHD4CZ6C052SL1500, RHD4CZ6A02SL1500, RHD4CZ6RA01SL1500 |
| RHD4GNTCZ6FT1800 |  | Final Testing and Commissioning for Telecommunications Network - FT-Z6-TC | 30d | 2027-05-10 | 2027-06-17 | RHD4CZ6A015TC2400, RHD4CZ6A02TC2400, RHD4CZ6C052TC2400, RHD4CZ6C062TC2400, RHD4CZ6RA01TC2400, RHD4GNLVZ6FT1500 |
| RHD4GNCCTVZ6FT2000 |  | Final Testing and Commissioning for Security "CCTV" Network - FT-Z6-CCTV | 30d | 2027-06-19 | 2027-07-22 | RHD4CZ6RA01CCTV4100, RHD4CZ6RA01CCTV1500, RHD4CZ6RA01CCTV4200, RHD4CZ6RA01CCTV5200, RHD4CZ6A015CCTV6100, RHD4CZ6A02CCTV6100 |
| RHD4GNICTZ6FT1900 |  | Final Testing and Commissioning for ICT Network - FT-Z6-ICT | 30d | 2027-11-06 | 2027-12-09 | RHD4CZ6A015ICT2400, RHD4CZ6A02ICT2400, RHD4CZ6C052ICT2400, RHD4CZ6C062ICT2400, RHD4GNICTZ4FT1900 SS |
| RHD4GNSTZ6FT1000 |  | Final Testing and Commissioning for Storm Network - FT-Z6-ST | 12d | 2027-11-06 | 2027-11-18 | RHD4CZ6A015ST1400, RHD4CZ6A02ST1400, RHD4CZ6C052ST1400, RHD4CZ6C062ST1400, RHD4CZ6A015ST1401, RHD4CZ6A02ST1401, RHD4CZ6C052ST1401, RHD4CZ6C062ST1401, RHD4CZ6A015ST1402, RHD4CZ6C052ST1402, RHD4CZ6C062ST1402, RHD4CZ6A015ST1403, RHD4CZ6C062ST1403, RHD4CZ6C062ST1404, RHD4CZ6A015ST2400, RHD4CZ6A02ST2400, RHD4CZ6C052ST2400, RHD4CZ6C062ST2400, RHD4CZ6C052ST2401, RHD4CZ6C062ST2401, RHD4CZ6C052ST8400, RHD4CZ6C062ST8400, RHD4CZ6A015ST3400, RHD4CZ6A02ST3400, RHD4CZ6C052ST3400, RHD4CZ6C062ST3400, RHD4CZ6A015ST3401, RHD4CZ6C052ST3401, RHD4CZ6C062ST3401, RHD4CZ6A015ST7400, RHD4CZ6A02ST7400, RHD4CZ6C052ST7400, RHD4CZ6C062ST7400, RHD4CZ6C062ST3501, RHD4CZ6C062ST3500, RHD4CZ6C062ST7500, RHD4CZ6C062ST8500, RHD4CZ6A015ST3501, RHD4CZ6A015ST3500, RHD4CZ6C052ST3501, RHD4CZ6C052ST3500, RHD4CZ6C052ST7500, RHD4CZ6C052ST8500, RHD4CZ6A02ST7500, RHD4CZ6A02ST3500, RHD4CZ6A015ST7500, RHD4GNSTZ2FT1000 SS, RHD4CZ6A02ST1500, RHD4CZ6CH6ST1130 |
| RHD4GNIRRZ6FT1300 |  | Final Testing and Commissioning for Irrigation Network - FT-Z6-IRR | 30d | 2027-11-20 | 2027-12-23 | RHD4CZ6A015IRR1400, RHD4CZ6C052IRR1400, RHD4CZ6C062IRR1400, RHD4CZ6A015IRR3203, RHD4CZ6C062IRR3203, RHD4CZ6A015IRR3200, RHD4CZ6C052IRR3200, RHD4CZ6A015IRR3202, RHD4GNIRRZ8FT1300 SS |
| RHD4GNMVZ6FT1400 |  | Final Testing and Commissioning for Medium Voltage Network - FT-Z6-MV | 30d | 2027-11-20 | 2027-12-23 | RHD4CZ6C052MV4200, RHD4CZ6C052MV3401, RHD4CZ6C062MV3401, RHD4CZ6C052MV3400, RHD4CZ6C062MV3400, RHD4CZ6C052MV3300, RHD4CZ6C062MV3300, RHD4GNMVZ4FT1400 SS |
| RHD4GNPTZ6FT1200 |  | Final Testing and Commissioning for Potable Water Network - FT-Z6-PT | 18d | 2027-11-20 | 2027-12-09 | RHD4CZ6A015PT4400, RHD4CZ6C052PT4400, RHD4CZ6C062PT4400, RHD4CZ6C052PT1400, RHD4CZ6C062PT1400, RHD4CZ6C052PT1401, RHD4CZ6C062PT1401, RHD4CZ6A015PT1402, RHD4CZ6A015PT4500, RHD4CZ6C052PT4500, RHD4CZ6C062PT4500, RHD4CZ6A015PT3200, RHD4CZ6C052PT3200, RHD4CZ6C062PT3200, RHD4CZ6A015PT3202, RHD4CZ6C052PT3202, RHD4CZ6A015PT4300, RHD4CZ6C052PT4300, RHD4CZ6C062PT4300, RHD4GNSWZ4FT1100 |
| RHD4GNSWZ6FT1100 |  | Final Testing and Commissioning for Sewage Network - FT-Z6-SW | 12d | 2027-11-20 | 2027-12-02 | RHD4CZ6C052SW3500, RHD4CZ6C062SW3500, RHD4CZ6C052SW2400, RHD4CZ6C062SW2400, RHD4CZ6C052SW3400, RHD4CZ6C062SW3400, RHD4GNSWZ5FT1100 SS |
|  | 9223 | **RHD4-02-002-Final Testing and Commissioning - FT-Z7** |  | 2027-06-09 | 2027-12-23 |  |
| RHD4GNLVZ7FT1500 |  | Final Testing and Commissioning for Low Voltage Network - FT-Z7-LV | 30d | 2027-06-09 | 2027-07-13 | RHD4CZ7A012LV3400, RHD4CZ7C02LV3400, RHD4CZ7C032LV3400, RHD4CZ7L131LV3400, RHD4CZ7L03LV3400, RHD4CZ7RA03LV3400, RHD4CZ7L03LV4300, RHD4CZ7RA03LV4300, RHD4GNLVZ2FT1500 SS |
| RHD4GNSLZ7FT1600 |  | Final Testing and Commissioning for Street Lighting Network - FT-Z7-SL | 22d | 2027-07-14 | 2027-08-08 | RHD4CZ7A012SL1500, RHD4CZ7C013SL1500, RHD4CZ7C02SL1500, RHD4CZ7C032SL1500, RHD4CZ7L131SL1500, RHD4CZ7L015SL1500, RHD4CZ7L03SL1500, RHD4CZ7RA03SL1500, RHD4CZ7RA05SL1500, RHD4CZ7A012SL3400, RHD4CZ7C013SL3400, RHD4CZ7C02SL3400, RHD4CZ7C032SL3400, RHD4CZ7L131SL3400, RHD4CZ7L015SL3400, RHD4CZ7L03SL3400, RHD4CZ7RA03SL3400, RHD4CZ7RA05SL3400 |
| RHD4GNTCZ7FT1800 |  | Final Testing and Commissioning for Telecommunications Network - FT-Z7-TC | 30d | 2027-10-02 | 2027-11-04 | RHD4CZ7A012TC2400, RHD4CZ7C013TC2400, RHD4CZ7C02TC2400, RHD4CZ7C032TC2400, RHD4CZ7L131TC2400, RHD4CZ7L015TC2400, RHD4CZ7L03TC2400, RHD4CZ7A012TC3400, RHD4CZ7C02TC3400, RHD4CZ7C032TC3400, RHD4CZ7L131TC3400, RHD4CZ7L015TC3400, RHD4CZ7L03TC3400, RHD4GNTCZ5FT1800 |
| RHD4GNCCTVZ7FT2000 |  | Final Testing and Commissioning for Security "CCTV" Network - FT-Z7-CCTV | 30d | 2027-10-06 | 2027-11-09 | RHD4CZ7C032CCTV1500, RHD4CZ7L03CCTV1500, RHD4CZ7RA03CCTV1500, RHD4CZ7C02CCTV4200, RHD4CZ7C032CCTV4200, RHD4CZ7L03CCTV4200, RHD4CZ7RA03CCTV4200, RHD4CZ7L131CCTV2100, RHD4CZ7L015CCTV2100, RHD4GNCCTVZ4FT2000 SS, RHD4CZ7C02CCTV1400 |
| RHD4GNICTZ7FT1900 |  | Final Testing and Commissioning for ICT Network - FT-Z7-ICT | 30d | 2027-11-06 | 2027-12-09 | RHD4CZ7A012ICT2400, RHD4CZ7C013ICT2400, RHD4CZ7C02ICT2400, RHD4CZ7C032ICT2400, RHD4CZ7L131ICT2400, RHD4CZ7L015ICT2400, RHD4CZ7L03ICT2400, RHD4CZ7RA03ICT2400, RHD4CZ7RA05ICT2400, RHD4GNICTZ4FT1900 SS |
| RHD4GNSTZ7FT1000 |  | Final Testing and Commissioning for Storm Network - FT-Z7-ST | 12d | 2027-11-06 | 2027-11-18 | RHD4CZ7A012ST8500, RHD4CZ7C02ST8500, RHD4CZ7A012ST7500, RHD4CZ7C02ST7500, RHD4CZ7L131ST7500, RHD4CZ7L015ST7500, RHD4CZ7L03ST7500, RHD4CZ7C02ST3500, RHD4CZ7L015ST3500, RHD4CZ7C02ST3501, RHD4CZ7L131ST3501, RHD4CZ7L015ST3501, RHD4CZ7C02ST3502, RHD4CZ7L03ST3502, RHD4CZ7C02ST1408, RHD4CZ7C02ST1409, RHD4CZ7C02ST1400, RHD4CZ7C02ST1401, RHD4CZ7L131ST1403, RHD4CZ7L015ST1403, RHD4CZ7L131ST1404, RHD4CZ7L015ST1404, RHD4CZ7L131ST1405, RHD4CZ7A012ST2400, RHD4CZ7C02ST2400, RHD4CZ7L131ST2400, RHD4CZ7L015ST2400, RHD4CZ7L03ST2400, RHD4CZ7A012ST8400, RHD4CZ7C02ST8400, RHD4CZ7C02ST3400, RHD4CZ7L015ST3400, RHD4CZ7C02ST3401, RHD4CZ7L131ST3401, RHD4CZ7L015ST3401, RHD4CZ7C02ST3402, RHD4CZ7L03ST3402, RHD4CZ7A012ST7400, RHD4CZ7C02ST7400, RHD4CZ7L131ST7400, RHD4CZ7L015ST7400, RHD4CZ7L03ST7400, RHD4GNSTZ2FT1000 SS |
| RHD4GNIRRZ7FT1300 |  | Final Testing and Commissioning for Irrigation Network - FT-Z7-IRR | 30d | 2027-11-20 | 2027-12-23 | RHD4CZ7C02IRR1400, RHD4CZ7L131IRR1400, RHD4CZ7L015IRR1400, RHD4CZ7L03IRR1400, RHD4CZ7A012IRR1403, RHD4CZ7C013IRR1404, RHD4CZ7C02IRR1404, RHD4CZ7L03IRR1404, RHD4CZ7L131IRR3203, RHD4CZ7L015IRR3203, RHD4CZ7L03IRR3203, RHD4CZ7C02IRR3201, RHD4CZ7L03IRR3201, RHD4CZ7C02IRR3200, RHD4CZ7L131IRR3200, RHD4CZ7L015IRR3200, RHD4CZ7L03IRR3200, RHD4CZ7L015IRR3202, RHD4GNIRRZ8FT1300 SS |
| RHD4GNMVZ7FT1400 |  | Final Testing and Commissioning for Medium Voltage Network - FT-Z7-MV | 30d | 2027-11-20 | 2027-12-23 | RHD4CZ7L03MV4200, RHD4CZ7C02MV3401, RHD4CZ7L131MV3401, RHD4CZ7L03MV3401, RHD4CZ7C02MV3400, RHD4CZ7L131MV3400, RHD4CZ7L03MV3400, RHD4CZ7L03MV3301, RHD4CZ7RA03MV3301, RHD4CZ7A012MV3300, RHD4CZ7C013MV3300, RHD4CZ7C02MV3300, RHD4CZ7C032MV3300, RHD4CZ7L131MV3300, RHD4CZ7L015MV3300, RHD4CZ7L03MV3300, RHD4GNMVZ4FT1400 SS |
| RHD4GNPTZ7FT1200 |  | Final Testing and Commissioning for Potable Water Network - FT-Z7-PT | 30d | 2027-11-20 | 2027-12-23 | RHD4CZ7A012PT4400, RHD4CZ7C032PT4400, RHD4CZ7L131PT4400, RHD4CZ7L015PT4400, RHD4CZ7L03PT4400, RHD4CZ7L131PT1400, RHD4CZ7L015PT1400, RHD4CZ7L03PT1400, RHD4CZ7C02PT1401, RHD4CZ7C032PT1401, RHD4CZ7L131PT1401, RHD4CZ7L015PT1401, RHD4CZ7L03PT1401, RHD4CZ7C032PT1402, RHD4CZ7A012PT1403, RHD4CZ7A012PT4500, RHD4CZ7C032PT4500, RHD4CZ7L131PT4500, RHD4CZ7L015PT4500, RHD4CZ7L03PT4500, RHD4CZ7C02PT3203, RHD4CZ7L131PT3203, RHD4CZ7A012PT3201, RHD4CZ7C02PT3200, RHD4CZ7C032PT3200, RHD4CZ7L131PT3200, RHD4CZ7L015PT3200, RHD4CZ7C02PT3202, RHD4CZ7C032PT3202, RHD4CZ7L015PT3202, RHD4CZ7L03PT3202, RHD4CZ7A012PT4300, RHD4CZ7C032PT4300, RHD4CZ7L131PT4300, RHD4CZ7L015PT4300, RHD4CZ7L03PT4300, RHD4GNPTZ6FT1200 SS |
| RHD4GNSWZ7FT1100 |  | Final Testing and Commissioning for Sewage Network - FT-Z7-SW | 12d | 2027-12-04 | 2027-12-16 | RHD4CZ7L03SW1400, RHD4CZ7L03SW1401, RHD4CZ7L015SW2400, RHD4CZ7L03SW2400, RHD4CZ7L015SW3400, RHD4CZ7L03SW3400, RHD4CZ7L015SW3500, RHD4CZ7L03SW3500, RHD4GNSWZ6FT1100 |
|  | 9224 | **RHD4-02-002-Final Testing and Commissioning - FT-Z8** |  | 2027-04-22 | 2027-12-23 |  |
| RHD4GNLVZ8FT1500 |  | Final Testing and Commissioning for Low Voltage Network - FT-Z8-LV | 30d | 2027-04-22 | 2027-05-31 | RHD4CZ8A011LV3400, RHD4CZ8C014LV3400, RHD4CZ4L01LV3400, RHD4CZ8RA04LV3400, RHD4CZ8A011LV4300, RHD4CZ8C014LV4300, RHD4CZ8RA04LV4300, RHD4GNLVZ2FT1500 SS |
| RHD4GNSLZ8FT1600 |  | Final Testing and Commissioning for Street Lighting Network - FT-Z8-SL | 30d | 2027-06-12 | 2027-07-15 | RHD4CZ8A011SL1500, RHD4CZ8C014SL1500, RHD4CZ4L01SL1500, RHD4CZ8L04SL1500, RHD4CZ8RA04SL1500, RHD4CZ8A011SL3400, RHD4CZ8C014SL3400, RHD4CZ4L01SL3400, RHD4CZ8L04SL3400, RHD4CZ8RA04SL3400 |
| RHD4GNTCZ8FT1800 |  | Final Testing and Commissioning for Telecommunications Network - FT-Z8-TC | 30d | 2027-10-02 | 2027-11-04 | RHD4CZ8A011TC2400, RHD4CZ8C014TC2400, RHD4CZ4L01TC2400, RHD4CZ8L04TC2400, RHD4GNTCZ5FT1800 |
| RHD4GNCCTVZ8FT2000 |  | Final Testing and Commissioning for Security "CCTV" Network - FT-Z8-CCTV | 30d | 2027-10-11 | 2027-11-14 | RHD4CZ8A011CCTV2100, RHD4CZ4L01CCTV2100, RHD4CZ8L04CCTV2100, RHD4CZ8RA04CCTV2100, RHD4CZ8A011CCTV1500, RHD4CZ8L04CCTV1500, RHD4CZ8RA04CCTV1500 |
| RHD4GNICTZ8FT1900 |  | Final Testing and Commissioning for ICT Network - FT-Z8-ICT | 30d | 2027-11-06 | 2027-12-09 | RHD4CZ8A011ICT2400, RHD4CZ8C014ICT2400, RHD4CZ4L01ICT2400, RHD4CZ8L04ICT2400, RHD4CZ8RA04ICT2400, RHD4GNICTZ4FT1900 SS |
| RHD4GNSTZ8FT1000 |  | Final Testing and Commissioning for Storm Network - FT-Z8-ST | 12d | 2027-11-06 | 2027-11-18 | RHD4CZ8A011ST7500, RHD4CZ8L04ST7500, RHD4CZ8A011ST3500, RHD4CZ8A011ST3501, RHD4CZ8L04ST3501, RHD4CZ8L04ST3502, RHD4CZ8A011ST1400, RHD4CZ8A011ST1401, RHD4CZ8A011ST1402, RHD4CZ8A011ST1403, RHD4CZ8A011ST1404, RHD4CZ8L04ST1404, RHD4CZ8L04ST1405, RHD4CZ8A011ST2400, RHD4CZ8L04ST2400, RHD4CZ8A011ST3400, RHD4CZ8A011ST3401, RHD4CZ8L04ST3401, RHD4CZ8L04ST3402, RHD4CZ8A011ST7400, RHD4CZ8L04ST7400, RHD4GNSTZ2FT1000 SS |
| RHD4GNIRRZ8FT1300 |  | Final Testing and Commissioning for Irrigation Network - FT-Z8-IRR | 30d | 2027-11-20 | 2027-12-23 | RHD4CZ8L04IRR1400, RHD4CZ8L04IRR3200, RHD4GNPTZ6FT1200 SS |
| RHD4GNMVZ8FT1400 |  | Final Testing and Commissioning for Medium Voltage Network - FT-Z8-MV | 30d | 2027-11-20 | 2027-12-23 | RHD4CZ8A011MV3401, RHD4CZ8C014MV3401, RHD4CZ8RA04MV3401, RHD4CZ8A011MV3400, RHD4CZ8C014MV3400, RHD4CZ8RA04MV3400, RHD4CZ8A011MV3301, RHD4CZ8C014MV3301, RHD4CZ8RA04MV3301, RHD4CZ8A011MV3300, RHD4CZ8C014MV3300, RHD4CZ4L01MV3300, RHD4CZ8L04MV3300, RHD4CZ8A011MV5400, RHD4CZ8C014MV5400, RHD4CZ8RA04MV5400, RHD4GNMVZ4FT1400 SS |
| RHD4GNPTZ8FT1200 |  | Final Testing and Commissioning for Potable Water Network - FT-Z8-PT | 30d | 2027-11-20 | 2027-12-23 | RHD4CZ8L04PT1400, RHD4CZ4L01PT1401, RHD4CZ8L04PT1401, RHD4CZ8A011PT1403, RHD4CZ8A011PT4500, RHD4CZ4L01PT4500, RHD4CZ8L04PT4500, RHD4CZ8A011PT3201, RHD4CZ4L01PT3200, RHD4CZ8L04PT3200, RHD4CZ8A011PT3202, RHD4CZ8A011PT4300, RHD4CZ4L01PT4300, RHD4CZ8L04PT4300, RHD4GNPTZ6FT1200 SS |
| RHD4GNSWZ8FT1100 |  | Final Testing and Commissioning for Sewage Network - FT-Z8-SW | 12d | 2027-12-04 | 2027-12-16 | RHD4GNSWZ7FT1100 SS |
|  | 9225 | **RHD4-02-002-Final Testing and Commissioning - FT-Z9** |  | 2027-07-08 | 2028-01-06 |  |
| RHD4GNLVZ9FT1500 |  | Final Testing and Commissioning for Low Voltage Network - FT-Z9-LV | 30d | 2027-07-08 | 2027-08-11 | RHD4CZ9C071LV3400, RHD4CZ9L02LV3400, RHD4CZ9L05LV3400, RHD4CZ9L06LV3400, RHD4CZ9C071SL1500, RHD4CZ9L02SL1500, RHD4CZ9L05SL1500, RHD4CZ9L06SL1500, RHD4GNLVZ2FT1500 SS |
| RHD4GNSLZ9FT1600 |  | Final Testing and Commissioning for Street Lighting Network - FT-Z9-SL | 30d | 2027-07-11 | 2027-08-14 | RHD4CZ9C071SL1500, RHD4CZ9L02SL1500, RHD4CZ9L05SL1500, RHD4CZ9L06SL1500, RHD4CZ9C071SL6100, RHD4CZ9L02SL6100, RHD4CZ9L05SL6100, RHD4CZ9L06SL6100, RHD4CZ9L02SL4300 |
| RHD4GNTCZ9FT1800 |  | Final Testing and Commissioning for Telecommunications Network - FT-Z9-TC | 30d | 2027-09-06 | 2027-10-11 | RHD4CZ9C071TC2400, RHD4CZ9L02TC2400, RHD4CZ9L05TC2400, RHD4CZ9L06TC2400, RHD4GNTCZ6FT1800 |
| RHD4GNICTZ9FT1900 |  | Final Testing and Commissioning for ICT Network - FT-Z9-ICT | 30d | 2027-11-06 | 2027-12-09 | RHD4CZ9C071ICT2400, RHD4CZ9L02ICT2400, RHD4CZ9L05ICT2400, RHD4CZ9L06ICT2400, RHD4GNICTZ4FT1900 SS |
| RHD4GNSTZ9FT1000 |  | Final Testing and Commissioning for Storm Network - FT-Z9-ST | 12d | 2027-11-06 | 2027-11-18 | RHD4CZ9C071ST7500, RHD4CZ9L02ST7500, RHD4CZ9L05ST7500, RHD4CZ9L06ST7500, RHD4CZ9C071ST3500, RHD4CZ9L02ST3500, RHD4CZ9L05ST3500, RHD4CZ9L06ST3500, RHD4CZ9C071ST3501, RHD4CZ9L02ST3501, RHD4CZ9L06ST3501, RHD4CZ9C071ST3502, RHD4CZ9L02ST3502, RHD4CZ9L06ST3502, RHD4CZ9C071ST1406, RHD4CZ9L02ST1406, RHD4CZ9L06ST1406, RHD4CZ9C071ST1407, RHD4CZ9L02ST1407, RHD4CZ9L02ST1408, RHD4CZ9C071ST1400, RHD4CZ9L06ST1400, RHD4CZ9C071ST1401, RHD4CZ9L02ST1401, RHD4CZ9L05ST1401, RHD4CZ9C071ST1402, RHD4CZ9L02ST1402, RHD4CZ9L05ST1402, RHD4CZ9L06ST1403, RHD4CZ9L02ST1404, RHD4CZ9L06ST1404, RHD4CZ9C071ST1405, RHD4CZ9L02ST1405, RHD4CZ9L06ST1405, RHD4CZ9C071ST2400, RHD4CZ9L02ST2400, RHD4CZ9L05ST2400, RHD4CZ9L06ST2400, RHD4CZ9C071ST3400, RHD4CZ9L02ST3400, RHD4CZ9L05ST3400, RHD4CZ9L06ST3400, RHD4CZ9C071ST3401, RHD4CZ9L02ST3401, RHD4CZ9L06ST3401, RHD4CZ9C071ST3402, RHD4CZ9L02ST3402, RHD4CZ9L06ST3402, RHD4CZ9C071ST7400, RHD4CZ9L02ST7400, RHD4CZ9L05ST7400, RHD4CZ9L06ST7400, RHD4GNSTZ2FT1000 SS |
| RHD4GNIRRZ9FT1300 |  | Final Testing and Commissioning for Irrigation Network - FT-Z9-IRR | 30d | 2027-11-20 | 2027-12-23 | RHD4CZ9C071IRR1400, RHD4CZ9L02IRR1400, RHD4CZ9L06IRR1400, RHD4CZ9C071IRR1407, RHD4CZ9L02IRR1407, RHD4CZ9L05IRR1407, RHD4CZ9L02IRR3203, RHD4CZ9L02IRR3200, RHD4CZ9L06IRR3200, RHD4CZ9L02IRR3202, RHD4GNIRRZ8FT1300 SS, RHD4PRSHLDOSIRR1300, RHD4PRSHLSTAGIRR1300, RHD4PRSHLDOSIRR1100, RHD4PRSHLSTAGIRR1100, RHD4PRSHLDOSIRR1200, RHD4PRSHLDOSIRR1400, RHD4PRSHLSTAGIRR1200, RHD4PRSHLSTAGIRR1400, RHD4ENSDZ9APPIRR140, RHD4CZ9L06IRR1100 |
| RHD4GNMVZ9FT1400 |  | Final Testing and Commissioning for Medium Voltage Network - FT-Z9-MV | 30d | 2027-11-20 | 2027-12-23 | RHD4CZ9L02MV4200, RHD4CZ9L06MV4200, RHD4CZ9L02MV3401, RHD4CZ9L06MV3401, RHD4CZ9L02MV3400, RHD4CZ9L06MV3400, RHD4CZ9L02MV3301, RHD4CZ9C071MV3300, RHD4CZ9L02MV3300, RHD4CZ9L05MV3300, RHD4CZ9L06MV3300, RHD4CZ9L02MV5100, RHD4GNMVZ4FT1400 SS |
| RHD4GNPTZ9FT1200 |  | Final Testing and Commissioning for Potable Water Network - FT-Z9-PT | 30d | 2027-11-20 | 2027-12-23 | RHD4CZ9L02PT1400, RHD4CZ9L06PT1400, RHD4CZ9C071PT1401, RHD4CZ9L02PT1401, RHD4CZ9L05PT1401, RHD4CZ9L06PT1401, RHD4CZ9C071PT1402, RHD4CZ9C071PT4500, RHD4CZ9L02PT4500, RHD4CZ9L05PT4500, RHD4CZ9L06PT4500, RHD4CZ9C071PT3203, RHD4CZ9L02PT3203, RHD4CZ9L05PT3203, RHD4CZ9L06PT3203, RHD4CZ9C071PT3200, RHD4CZ9L02PT3200, RHD4CZ9L05PT3200, RHD4CZ9L06PT3200, RHD4CZ9C071PT3202, RHD4CZ9C071PT4300, RHD4CZ9L02PT4300, RHD4CZ9L05PT4300, RHD4CZ9L06PT4300, RHD4GNPTZ6FT1200 SS |
| RHD4GNSWZ9FT1100 |  | Final Testing and Commissioning for Sewage Network - FT-Z9-SW | 12d | 2027-12-04 | 2027-12-16 | RHD4CZ9L02SW3500, RHD4CZ9L06SW3500, RHD4CZ9L02SW2400, RHD4CZ9L06SW2400, RHD4CZ9L02SW3400, RHD4CZ9L06SW3400, RHD4GNSWZ7FT1100 SS, RHD4PRSHLDOSSW1408, RHD4PRSHLSTAGSW1408, RHD4PRSHLDOSSW1308, RHD4PRSHLSTAGSW1308 |
| RHD4GNCCTVZ9FT2000 |  | Final Testing and Commissioning for Security "CCTV" Network - FT-Z9-CCTV | 20d | 2027-12-15 | 2028-01-06 | RHD4CZ9C071CCTV4100, RHD4CZ9L02CCTV4100, RHD4CZ9C071CCTV1500, RHD4CZ9L02CCTV1500, RHD4CZ9C071CCTV3100, RHD4CZ9L02CCTV3100, RHD4GNCCTVZ4FT2000 SS, RHD4CZ9L06ICT2400, RHD4CZ9L06TC2400 |
|  | 1 | **RHD4-02-002-Final Testing and Commissioning - FT-LFTS** |  | 2027-09-19 | 2028-01-03 |  |
| RHD4GNSWL1LFTSFT1000 |  | Final Testing and Commissioning for Sewage Lift Station 1 - FT-LFTS-SWL1 | 30d | 2027-09-19 | 2027-10-24 | RHD4CSWL1B07D151214, RHD4CSWL1B07D151191, RHD4CSWL1B07D151180, RHD4CSWL1B07D151178, RHD4CSWL1B07D101162, RHD4CZ1B03EX1000 |
| RHD4GNSTL1LFTSFT1200 |  | Final Testing and Commissioning for Storm Lift Station 1 - FT-LFTS-STL1 | 7d | 2027-12-27 | 2028-01-03 | RHD4CSTL1B07D151185, RHD4CSTL1B07D151178, RHD4CSTL1B07D151170, RHD4CSTL1B07D161155, RHD4CSTL1B07D161152, RHD4CSTL1B07D161133, RHD4GNSTZ5FT1000, RHD4CZ3C011RD9100, RHD4CZ1L101RD4100, RHD4CZ5RA07RD9200, RHD4CZ3C011RD7100, RHD4CZ1L101RD7100, RHD4CSTL1B07D161145 |
|  | 9226 | **RHD4-02-002-Close Out - HO** |  | 2027-05-06 | 2028-05-30 |  |
|  | 9227 | **RHD4-02-002-As Built Drawings - AS** |  | 2027-05-06 | 2028-05-30 |  |
|  | 9228 | **RHD4-02-002-As Built Drawing Submittals** |  | 2027-05-06 | 2028-05-10 |  |
|  | 9229 | **RHD4-02-002-As Built Drawing Submittals-Z1** |  | 2027-06-30 | 2028-04-09 |  |
| RHD4HOASZ1SUBLV160 |  | Prepare and Submit As-Built Drawings for Low Voltage Network for LV-Z1-SUB | 8d | 2027-06-30 | 2027-07-08 | RHD4HOASZ2SUBLV160, RHD4GNLVZ1FT1500 |
| RHD4HOASZ1SUBST110 |  | Prepare and Submit As-Built Drawings for Storm Water Network for ST-Z1-SUB | 14d | 2027-12-18 | 2028-01-02 | RHD4GNSTZ9FT1000, RHD4HOASZ6SUBTC190, RHD4HOASZ2SUBST110, RHD4GNSTZ1FT1000 |
| RHD4HOASZ1SUBTC190 |  | Prepare and Submit As-Built Drawings for Telecommunications Network for TC-Z1-SUB | 15d | 2028-01-20 | 2028-02-06 | RHD4HOASZ2SUBTC190, RHD4HOASZ6APPSW120, RHD4HOASSTL1APP1000, RHD4GNTCZ1FT1800 |
| RHD4HOASZ1SUBCCTV210 |  | Prepare and Submit As-Built Drawings for Security Network for CCTV-Z1-SUB | 8d | 2028-02-07 | 2028-02-15 | RHD4CZ1C081CCTV6100, RHD4CZ1L101CCTV6100, RHD4HOASZ2SUBCCTV210, RHD4GNCCTVZ1FT2000 |
| RHD4HOASZ1SUBIRR140 |  | Prepare and Submit As-Built Drawings for Irrigation Network for IRR-Z1-SUB | 10d | 2028-02-09 | 2028-02-20 | RHD4HOASZ2SUBIRR140, RHD4GNIRRZ1FT1300 |
| RHD4HOASZ1SUBMV150 |  | Prepare and Submit As-Built Drawings for Medium Voltage Network for MV-Z1-SUB | 8d | 2028-02-09 | 2028-02-17 | RHD4HOASZ2SUBMV150, RHD4GNMVZ1FT1400 |
| RHD4HOASZ1SUBEW100 |  | Prepare and Submit As-Built Drawings for Road Plans and Profile for EW-Z1-SUB | 9d | 2028-02-10 | 2028-02-20 | RHD4CZ1C081RD4100, RHD4CZ1L101RD4100, RHD4CZ1C081RD8100, RHD4CZ1B03BF2000, RHD4HOASZ2SUBEW100 |
| RHD4HOASZ1SUBPT130 |  | Prepare and Submit As-Built Drawings for Potable Water Network for PT-Z1-SUB | 8d | 2028-02-14 | 2028-02-23 | RHD4HOASZ2SUBPT130, RHD4GNPTZ1FT1200 |
| RHD4HOASZ1SUBSL170 |  | Prepare and Submit As-Built Drawings for Street Lighting Network for SL-Z1-SUB | 15d | 2028-02-20 | 2028-03-12 | RHD4CZ1C081SL6100, RHD4CZ1L101SL6100, RHD4HOASZ2SUBSL170, RHD4GNSLZ1FT1600 |
| RHD4HOASZ1SUBSW120 |  | Prepare and Submit As-Built Drawings for Sewage Network for SW-Z1-SUB | 8d | 2028-03-01 | 2028-03-09 | RHD4HOASZ2SUBSW120, RHD4GNSWZ1FT1100 |
| RHD4HOASZ1SUBRD220 |  | Prepare and Submit As-Built Drawings for Road Works( KERBING AND PAVEMENT ) for RD-Z1-SUB | 6d | 2028-03-11 | 2028-03-16 | RHD4CZ1C081RD4100, RHD4CZ1L101RD4100, RHD4CZ1C081RD7100, RHD4CZ1L101RD7100, RHD4HOASZ2SUBRD220 |
| RHD4HOASZ1SUBICT200 |  | Prepare and Submit As-Built Drawings for Information and Communication Technologies Network for ICT-Z1-SUB | 8d | 2028-04-01 | 2028-04-09 | RHD4CZ1L101ICT5200, RHD4HOASZ2SUBICT200, RHD4GNICTZ1FT1900 |
|  | 9230 | **RHD4-02-002-As Built Drawing Submittals-Z2** |  | 2027-06-21 | 2028-03-30 |  |
| RHD4HOASZ2SUBLV160 |  | Prepare and Submit As-Built Drawings for Low Voltage Network for LV-Z2-SUB | 8d | 2027-06-21 | 2027-06-29 | RHD4CZ2L102LV3400, RHD4HOASZ3SUBLV160, RHD4GNLVZ2FT1500 |
| RHD4HOASZ2SUBST110 |  | Prepare and Submit As-Built Drawings for Storm Water Network for ST-Z2-SUB | 12d | 2027-12-04 | 2027-12-16 | RHD4CZ2L102ST4600, RHD4HOASZ3SUBST110, RHD4GNSTZ2FT1000 |
| RHD4HOASZ2SUBTC190 |  | Prepare and Submit As-Built Drawings for Telecommunications Network for TC-Z2-SUB | 6d | 2028-01-13 | 2028-01-19 | RHD4HOASZ3SUBTC190, RHD4GNCCTVZ9FT2000, RHD4GNTCZ2FT1800 |
| RHD4HOASZ2SUBCCTV210 |  | Prepare and Submit As-Built Drawings for Security Network for CCTV-Z2-SUB | 8d | 2028-01-29 | 2028-02-06 | RHD4CZ2C082CCTV6100, RHD4CZ2L102CCTV6100, RHD4HOASZ3SUBCCTV210, RHD4GNCCTVZ2FT2000 |
| RHD4HOASZ2SUBEW100 |  | Prepare and Submit As-Built Drawings for Road Plans and Profile for EW-Z2-SUB | 10d | 2028-01-30 | 2028-02-09 | RHD4CZ2C082RD8100, RHD4CZ2B05EX1001, RHD4CZ2B05EX1000, RHD4HOASZ3SUBEW100 |
| RHD4HOASZ2SUBIRR140 |  | Prepare and Submit As-Built Drawings for Irrigation Network for IRR-Z2-SUB | 8d | 2028-01-31 | 2028-02-08 | RHD4HOASZ3SUBIRR140, RHD4GNIRRZ2FT1300 |
| RHD4HOASZ2SUBMV150 |  | Prepare and Submit As-Built Drawings for Medium Voltage Network for MV-Z2-SUB | 8d | 2028-01-31 | 2028-02-08 | RHD4HOASZ3SUBMV150, RHD4GNMVZ2FT1400 |
| RHD4HOASZ2SUBSL170 |  | Prepare and Submit As-Built Drawings for Street Lighting Network for SL-Z2-SUB | 15d | 2028-02-02 | 2028-02-19 | RHD4HOASZ3SUBSL170, RHD4GNSWZ1FT1100, RHD4HOASZ9SUBRD220, RHD4HOASSTL1SUB1200, RHD4HOASSTL1SUB1300, RHD4GNSLZ2FT1600 |

| ID | WBS | Task | Duration | Start | Finish | Predecessors |
| --- | --- | --- | --- | --- | --- | --- |
| RHD4HOASZ2SUBPT130 |  | Prepare and Submit As-Built Drawings for Potable Water Network for PT-Z2-SUB | 8d | 2028-02-05 | 2028-02-13 | RHD4HOASZ3SUBPT130, RHD4GNPTZ2FT1200 |
| RHD4HOASZ2SUBSW120 |  | Prepare and Submit As-Built Drawings for Sewage Network for SW-Z2-SUB | 6d | 2028-02-19 | 2028-02-26 | RHD4HOASZ3SUBSW120, RHD4GNSWZ2FT1100 |
| RHD4HOASZ2SUBRD220 |  | Prepare and Submit As-Built Drawings for Road Works( KERBING AND PAVEMENT ) for RD-Z2-SUB | 6d | 2028-03-04 | 2028-03-09 | RHD4CZ2C082RD4100, RHD4CZ2L102RD4100, RHD4CZ2L011RD4100, RHD4CZ2C082RD7100 SS, RHD4CZ2L102RD7100, RHD4CZ2L011RD7100, RHD4HOASZ3SUBRD220 |
| RHD4HOASZ2SUBICT200 |  | Prepare and Submit As-Built Drawings for Information and Communication Technologies Network for ICT-Z2-SUB | 14d | 2028-03-15 | 2028-03-30 | RHD4HOASZ3SUBICT200, RHD4GNICTZ2FT1900 |
|  | 9231 | **RHD4-02-002-As Built Drawing Submittals-Z3** |  | 2027-06-12 | 2028-03-14 |  |
| RHD4HOASZ3SUBLV160 |  | Prepare and Submit As-Built Drawings for Low Voltage Network for LV-Z3-SUB | 8d | 2027-06-12 | 2027-06-20 | RHD4HOASZ4SUBLV160, RHD4GNLVZ3FT1500 |
| RHD4HOASZ3SUBST110 |  | Prepare and Submit As-Built Drawings for Storm Water Network for ST-Z3-SUB | 12d | 2027-11-20 | 2027-12-02 | RHD4GNSTZ3FT1000 |
| RHD4HOASZ3SUBTC190 |  | Prepare and Submit As-Built Drawings for Telecommunications Network for TC-Z3-SUB | 6d | 2028-01-06 | 2028-01-12 | RHD4HOASZ4SUBTC190, RHD4GNPTZ1FT1200, RHD4GNIRRZ1FT1300, RHD4GNMVZ1FT1400, RHD4GNPTZ2FT1200, RHD4GNIRRZ2FT1300, RHD4GNMVZ2FT1400, RHD4GNPTZ3FT1200, RHD4GNIRRZ3FT1300, RHD4GNMVZ3FT1400, RHD4GNPTZ7FT1200, RHD4GNIRRZ7FT1300, RHD4GNMVZ7FT1400, RHD4GNSWZ8FT1100, RHD4GNPTZ8FT1200, RHD4GNMVZ8FT1400, RHD4GNPTZ9FT1200, RHD4GNIRRZ9FT1300, RHD4GNMVZ9FT1400, RHD4HOASZ4APPTC190, RHD4CZ3C083RD7100, RHD4GNTCZ3FT1800 |
| RHD4HOASZ3SUBEW100 |  | Prepare and Submit As-Built Drawings for Road Plans and Profile for EW-Z3-SUB | 16d | 2028-01-11 | 2028-01-29 | RHD4CZ3BZ3BF2001, RHD4HOASZ4SUBEW100 |
| RHD4HOASZ3SUBSL170 |  | Prepare and Submit As-Built Drawings for Street Lighting Network for SL-Z3-SUB | 15d | 2028-01-16 | 2028-02-01 | RHD4HOASZ4SUBSL170, RHD4GNSLZ3FT1600 |
| RHD4HOASZ3SUBCCTV210 |  | Prepare and Submit As-Built Drawings for Security Network for CCTV-Z3-SUB | 8d | 2028-01-19 | 2028-01-27 | RHD4HOASZ4SUBCCTV210, RHD4GNCCTVZ3FT2000 |
| RHD4HOASZ3SUBIRR140 |  | Prepare and Submit As-Built Drawings for Irrigation Network for IRR-Z3-SUB | 8d | 2028-01-22 | 2028-01-30 | RHD4HOASZ4SUBIRR140, RHD4GNIRRZ3FT1300 |
| RHD4HOASZ3SUBMV150 |  | Prepare and Submit As-Built Drawings for Medium Voltage Network for MV-Z3-SUB | 8d | 2028-01-22 | 2028-01-30 | RHD4HOASZ4SUBMV150, RHD4GNMVZ3FT1400 |
| RHD4HOASZ3SUBPT130 |  | Prepare and Submit As-Built Drawings for Potable Water Network for PT-Z3-SUB | 8d | 2028-01-26 | 2028-02-03 | RHD4HOASZ4SUBPT130, RHD4GNPTZ3FT1200 |
| RHD4HOASZ3SUBSW120 |  | Prepare and Submit As-Built Drawings for Sewage Network for SW-Z3-SUB | 6d | 2028-02-12 | 2028-02-17 | RHD4HOASZ4SUBSW120, RHD4GNSWZ3FT1100 |
| RHD4HOASZ3SUBICT200 |  | Prepare and Submit As-Built Drawings for Information and Communication Technologies Network for ICT-Z3-SUB | 16d | 2028-02-21 | 2028-03-14 | RHD4HOASZ4SUBICT200, RHD4GNICTZ3FT1900 |
| RHD4HOASZ3SUBRD220 |  | Prepare and Submit As-Built Drawings for Road Works( KERBING AND PAVEMENT ) for RD-Z3-SUB | 6d | 2028-02-21 | 2028-03-02 | RHD4CZ3C011RD4100, RHD4CZ3C083RD4100, RHD4CZ3L122RD4100, RHD4CZ3C011RD7100, RHD4CZ3C083RD7100, RHD4CZ3L122RD7100, RHD4HOASZ4SUBRD220 |
|  | 9232 | **RHD4-02-002-As Built Drawing Submittals-Z4** |  | 2027-05-30 | 2028-02-10 |  |
| RHD4HOASZ4SUBLV160 |  | Prepare and Submit As-Built Drawings for Low Voltage Network for LV-Z4-SUB | 8d | 2027-05-30 | 2027-06-07 | RHD4HOASZ6SUBLV160, RHD4GNLVZ4FT1500 |
| RHD4HOASZ4SUBSL170 |  | Prepare and Submit As-Built Drawings for Street Lighting Network for SL-Z4-SUB | 15d | 2027-06-24 | 2027-07-11 | RHD4HOASZ6SUBSL170, RHD4GNSLZ4FT1600 |
| RHD4HOASZ4SUBTC190 |  | Prepare and Submit As-Built Drawings for Telecommunications Network for TC-Z4-SUB | 16d | 2027-11-06 | 2027-11-23 | RHD4HOASZ6SUBTC190, RHD4GNTCZ4FT1800 |
| RHD4HOASZ4SUBEW100 |  | Prepare and Submit As-Built Drawings for Road Plans and Profile for EW-Z4-SUB | 6d | 2028-01-04 | 2028-01-10 | RHD4CZ4BZ4BF4001, RHD4CZ4B07BF4001, RHD4CZ4C012RD8100, RHD4CZ4A013RW1000, RHD4CZ4BZ4EX1001, RHD4HOASZ6SUBEW100 |
| RHD4HOASZ4SUBCCTV210 |  | Prepare and Submit As-Built Drawings for Security Network for CCTV-Z4-SUB | 8d | 2028-01-10 | 2028-01-18 | RHD4CZ4C031CCTV6100, RHD4CZ4L014CCTV6100, RHD4HOASZ6SUBCCTV210, RHD4GNCCTVZ4FT2000 |
| RHD4HOASZ4SUBIRR140 |  | Prepare and Submit As-Built Drawings for Irrigation Network for IRR-Z4-SUB | 8d | 2028-01-12 | 2028-01-20 | RHD4HOASZ6SUBIRR140, RHD4GNIRRZ4FT1300 |
| RHD4HOASZ4SUBMV150 |  | Prepare and Submit As-Built Drawings for Medium Voltage Network for MV-Z4-SUB | 8d | 2028-01-12 | 2028-01-20 | RHD4HOASZ6SUBMV150, RHD4GNMVZ4FT1400 |
| RHD4HOASZ4SUBST110 |  | Prepare and Submit As-Built Drawings for Storm Water Network for ST-Z4-SUB | 12d | 2028-01-15 | 2028-01-27 | RHD4HOASZ5SUBST110, RHD4HOASZ3SUBST110, RHD4HOASZ6SUBST110, RHD4GNSTZ4FT1000 |
| RHD4HOASZ4SUBICT200 |  | Prepare and Submit As-Built Drawings for Information and Communication Technologies Network for ICT-Z4-SUB | 16d | 2028-01-17 | 2028-02-03 | RHD4HOASZ6SUBICT200, RHD4GNICTZ4FT1900 |
| RHD4HOASZ4SUBPT130 |  | Prepare and Submit As-Built Drawings for Potable Water Network for PT-Z4-SUB | 8d | 2028-01-17 | 2028-01-25 | RHD4HOASZ6SUBPT130, RHD4GNPTZ4FT1200 |
| RHD4HOASZ4SUBRD220 |  | Prepare and Submit As-Built Drawings for Road Works( KERBING AND PAVEMENT ) for RD-Z4-SUB | 8d | 2028-01-26 | 2028-02-03 | RHD4CZ4A013RD4100, RHD4CZ4C012RD4100, RHD4CZ4C031RD4100, RHD4CZ4L014RD4100, RHD4CZ4L09RD4100, RHD4CZ4RA02RD4100, RHD4CZ4A013RD7100, RHD4CZ4C012RD7100, RHD4CZ4C031RD7100, RHD4CZ4L014RD7100, RHD4CZ4L09RD7100, RHD4CZ4RA02RD7100, RHD4HOASZ6SUBRD220 |
| RHD4HOASZ4SUBSW120 |  | Prepare and Submit As-Built Drawings for Sewage Network for SW-Z4-SUB | 12d | 2028-01-29 | 2028-02-10 | RHD4HOASZ4SUBST110, RHD4HOASZ6SUBSW120, RHD4GNSWZ4FT1100 |
|  | 9233 | **RHD4-02-002-As Built Drawing Submittals-Z5** |  | 2027-05-06 | 2028-01-17 |  |
| RHD4HOASZ5SUBLV160 |  | Prepare and Submit As-Built Drawings for Low Voltage Network for LV-Z5-SUB | 8d | 2027-05-06 | 2027-05-19 | RHD4GNLVZ5FT1500 |
| RHD4HOASZ5SUBSL170 |  | Prepare and Submit As-Built Drawings for Street Lighting Network for SL-Z5-SUB | 15d | 2027-08-14 | 2027-08-30 | RHD4GNSLZ5FT1600 |
| RHD4HOASZ5SUBTC190 |  | Prepare and Submit As-Built Drawings for Telecommunications Network for TC-Z5-SUB | 15d | 2027-10-02 | 2027-10-18 | RHD4GNTCZ5FT1800 |
| RHD4HOASZ5SUBSW120 |  | Prepare and Submit As-Built Drawings for Sewage Network for SW-Z5-SUB | 12d | 2027-12-04 | 2027-12-16 | RHD4GNSWZ5FT1100 |
| RHD4HOASZ5SUBICT200 |  | Prepare and Submit As-Built Drawings for Information and Communication Technologies Network for ICT-Z5-SUB | 16d | 2027-12-11 | 2027-12-28 | RHD4GNICTZ5FT1900 |
| RHD4HOASZ5SUBEW100 |  | Prepare and Submit As-Built Drawings for Road Plans and Profile for EW-Z5-SUB | 8d | 2027-12-16 | 2027-12-25 | RHD4CZ5C051RD7100, RHD4CZ5RA07RD9200, RHD4CZ5C061RD7100, RHD4CZ5L08RD7100, RHD4CZ5L016RD7100, RHD4CZ5A014RD7100, RHD4CZ5L07RD7100, RHD4CZ5A014RD8100 |
| RHD4HOASZ5SUBST110 |  | Prepare and Submit As-Built Drawings for Storm Water Network for ST-Z5-SUB | 12d | 2027-12-18 | 2027-12-30 | RHD4CZ5L08ST4600, RHD4HOASZ2SUBST110, RHD4GNSTZ5FT1000 |
| RHD4HOASZ5SUBCCTV210 |  | Prepare and Submit As-Built Drawings for Security Network for CCTV-Z5-SUB | 8d | 2027-12-22 | 2027-12-30 | RHD4CZ5L016CCTV6100, RHD4CZ5L07CCTV6100, RHD4GNCCTVZ5FT2000 |
| RHD4HOASZ5SUBIRR140 |  | Prepare and Submit As-Built Drawings for Irrigation Network for IRR-Z5-SUB | 8d | 2027-12-25 | 2028-01-02 | RHD4GNIRRZ5FT1300 |
| RHD4HOASZ5SUBMV150 |  | Prepare and Submit As-Built Drawings for Medium Voltage Network for MV-Z5-SUB | 8d | 2027-12-25 | 2028-01-02 | RHD4GNMVZ5FT1400 |
| RHD4HOASZ5SUBPT130 |  | Prepare and Submit As-Built Drawings for Potable Water Network for PT-Z5-SUB | 8d | 2027-12-25 | 2028-01-02 | RHD4GNPTZ5FT1200 |
| RHD4HOASZ5SUBRD220 |  | Prepare and Submit As-Built Drawings for Road Works( KERBING AND PAVEMENT ) for RD-Z5-SUB | 6d | 2028-01-11 | 2028-01-17 | RHD4CZ5A014RD4100, RHD4CZ5C051RD4100, RHD4CZ5C061RD4100, RHD4CZ5L016RD4100, RHD4CZ5L07RD4100, RHD4CZ5L08RD4100, RHD4CZ5RA07RD4100, RHD4CZ5C051RD7100, RHD4CZ5RA07RD7100, RHD4CZ5C061RD7100, RHD4CZ5A014RD7100, RHD4CZ5L016RD7100, RHD4CZ5L07RD7100, RHD4CZ5L08RD7100, RHD4HOASZ4SUBEW100 |
|  | 9234 | **RHD4-02-002-As Built Drawing Submittals-Z6** |  | 2027-05-20 | 2028-01-25 |  |
| RHD4HOASZ6SUBLV160 |  | Prepare and Submit As-Built Drawings for Low Voltage Network for LV-Z6-SUB | 8d | 2027-05-20 | 2027-05-29 | RHD4HOASZ5SUBLV160, RHD4GNLVZ6FT1500 |
| RHD4HOASZ6SUBSL170 |  | Prepare and Submit As-Built Drawings for Street Lighting Network for SL-Z6-SUB | 15d | 2027-05-22 | 2027-06-07 | RHD4GNSLZ6FT1600 |
| RHD4HOASZ6SUBTC190 |  | Prepare and Submit As-Built Drawings for Telecommunications Network for TC-Z6-SUB | 15d | 2027-10-19 | 2027-11-04 | RHD4HOASZ5SUBTC190, RHD4HOASZ5SUBTC190 FF, RHD4GNTCZ6FT1800 |
| RHD4HOASZ6SUBSW120 |  | Prepare and Submit As-Built Drawings for Sewage Network for SW-Z6-SUB | 14d | 2027-12-18 | 2028-01-02 | RHD4HOASZ5SUBSW120, RHD4HOASZ5SUBSW120 FF, RHD4GNSWZ6FT1100 |
| RHD4HOASZ6SUBEW100 |  | Prepare and Submit As-Built Drawings for Road Plans and Profile for EW-Z6-SUB | 8d | 2027-12-26 | 2028-01-03 | RHD4HOASTUN1APP1100 SS, RHD4HOASTUN1APP1200 SS, RHD4HOASZ5SUBEW100 |
| RHD4HOASZ6SUBICT200 |  | Prepare and Submit As-Built Drawings for Information and Communication Technologies Network for ICT-Z6-SUB | 16d | 2027-12-29 | 2028-01-16 | RHD4HOASZ5SUBICT200, RHD4GNICTZ6FT1900 |
| RHD4HOASZ6SUBCCTV210 |  | Prepare and Submit As-Built Drawings for Security Network for CCTV-Z6-SUB | 8d | 2028-01-01 | 2028-01-09 | RHD4HOASZ5SUBCCTV210, RHD4GNCCTVZ6FT2000 |
| RHD4HOASZ6SUBST110 |  | Prepare and Submit As-Built Drawings for Storm Water Network for ST-Z6-SUB | 12d | 2028-01-01 | 2028-01-13 | RHD4HOASZ5SUBST110, RHD4HOASZ5SUBST110 FF, RHD4GNSTZ6FT1000 |
| RHD4HOASZ6SUBIRR140 |  | Prepare and Submit As-Built Drawings for Irrigation Network for IRR-Z6-SUB | 8d | 2028-01-03 | 2028-01-11 | RHD4HOASZ5SUBIRR140, RHD4GNIRRZ6FT1300 |
| RHD4HOASZ6SUBMV150 |  | Prepare and Submit As-Built Drawings for Medium Voltage Network for MV-Z6-SUB | 8d | 2028-01-03 | 2028-01-11 | RHD4HOASZ5SUBMV150, RHD4GNMVZ6FT1400 |
| RHD4HOASZ6SUBPT130 |  | Prepare and Submit As-Built Drawings for Potable Water Network for PT-Z6-SUB | 12d | 2028-01-03 | 2028-01-16 | RHD4HOASZ6SUBSW120, RHD4HOASZ5SUBPT130, RHD4GNPTZ6FT1200 |
| RHD4HOASZ6SUBRD220 |  | Prepare and Submit As-Built Drawings for Road Works( KERBING AND PAVEMENT ) for RD-Z6-SUB | 7d | 2028-01-18 | 2028-01-25 | RHD4CZ6A015RD4100, RHD4CZ6A02RD4100, RHD4CZ6C052RD4100, RHD4CZ6C062RD4100, RHD4CZ6RA01RD4100, RHD4CZ6A02RD7100, RHD4CZ6RA01RD7100, RHD4CZ6C062RD7100, RHD4CZ6A015RD7100, RHD4CZ6C052RD7100, RHD4HOASZ5SUBRD220 |
|  | 9235 | **RHD4-02-002-As Built Drawing Submittals-Z7** |  | 2027-07-14 | 2028-04-18 |  |
| RHD4HOASZ7SUBLV160 |  | Prepare and Submit As-Built Drawings for Low Voltage Network for LV-Z7-SUB | 8d | 2027-07-14 | 2027-07-22 | RHD4HOASZ1SUBLV160, RHD4GNLVZ7FT1500 |
| RHD4HOASZ7SUBST110 |  | Prepare and Submit As-Built Drawings for Storm Water Network for ST-Z7-SUB | 12d | 2028-01-03 | 2028-01-16 | RHD4HOASZ5SUBST110, RHD4HOASZ1SUBST110, RHD4GNSTZ7FT1000 |
| RHD4HOASZ7SUBTC190 |  | Prepare and Submit As-Built Drawings for Telecommunications Network for TC-Z7-SUB | 15d | 2028-02-07 | 2028-02-24 | RHD4HOASZ1SUBTC190, RHD4GNTCZ7FT1800 |
| RHD4HOASZ7SUBCCTV210 |  | Prepare and Submit As-Built Drawings for Security Network for CCTV-Z7-SUB | 13d | 2028-02-16 | 2028-03-06 | RHD4CZ7L131CCTV2100, RHD4CZ7C02CCTV6100, RHD4CZ7C032CCTV6100, RHD4CZ7L03CCTV6100, RHD4CZ7RA03CCTV6100, RHD4HOASZ1SUBCCTV210, RHD4GNCCTVZ7FT2000 |
| RHD4HOASZ7SUBMV150 |  | Prepare and Submit As-Built Drawings for Medium Voltage Network for MV-Z7-SUB | 10d | 2028-02-19 | 2028-03-05 | RHD4HOASZ1SUBMV150, RHD4GNMVZ7FT1400 |
| RHD4HOASZ7SUBEW100 |  | Prepare and Submit As-Built Drawings for Road Plans and Profile for EW-Z7-SUB | 8d | 2028-02-21 | 2028-03-05 | RHD4CZ7C02RD8100, RHD4HOASZ1SUBEW100 |
| RHD4HOASZ7SUBIRR140 |  | Prepare and Submit As-Built Drawings for Irrigation Network for IRR-Z7-SUB | 16d | 2028-02-21 | 2028-03-14 | RHD4CZ7A012IRR5100, RHD4HOASZ1SUBIRR140, RHD4GNIRRZ7FT1300 |
| RHD4HOASZ7SUBPT130 |  | Prepare and Submit As-Built Drawings for Potable Water Network for PT-Z7-SUB | 14d | 2028-02-24 | 2028-03-14 | RHD4HOASZ1SUBPT130, RHD4GNPTZ7FT1200 |
| RHD4HOASZ7SUBSW120 |  | Prepare and Submit As-Built Drawings for Sewage Network for SW-Z7-SUB | 12d | 2028-03-11 | 2028-03-23 | RHD4HOASZ1SUBSW120, RHD4GNSWZ7FT1100 |
| RHD4HOASZ7SUBSL170 |  | Prepare and Submit As-Built Drawings for Street Lighting Network for SL-Z7-SUB | 15d | 2028-03-13 | 2028-03-29 | RHD4CZ7C013SL6100, RHD4CZ7C02SL6100, RHD4CZ7RA03SL6100, RHD4HOASZ1SUBSL170, RHD4GNSLZ7FT1600 |
| RHD4HOASZ7SUBRD220 |  | Prepare and Submit As-Built Drawings for Road Works( KERBING AND PAVEMENT ) for RD-Z7-SUB | 6d | 2028-03-18 | 2028-03-23 | RHD4CZ7A012RD4100, RHD4CZ7C013RD4100, RHD4CZ7C02RD4100, RHD4CZ7C032RD4100, RHD4CZ7L131RD4100, RHD4CZ7L015RD4100, RHD4CZ7L03RD4100, RHD4CZ7RA03RD4100, RHD4CZ7RA05RD4100, RHD4CZ7RA05RD9100, RHD4CZ7RA05RD7100, RHD4CZ7A012RD7100, RHD4CZ7C013RD7100, RHD4CZ7C02RD7100, RHD4CZ7C032RD7100, RHD4CZ7L131RD7100, RHD4CZ7L015RD7100, RHD4CZ7L03RD7100, RHD4CZ7RA03RD7100, RHD4HOASZ1SUBRD220 |
| RHD4HOASZ7SUBICT200 |  | Prepare and Submit As-Built Drawings for Information and Communication Technologies Network for ICT-Z7-SUB | 8d | 2028-04-10 | 2028-04-18 | RHD4HOASZ1SUBICT200, RHD4GNICTZ7FT1900 |
|  | 9236 | **RHD4-02-002-As Built Drawing Submittals-Z8** |  | 2027-07-24 | 2028-04-27 |  |

| ID | WBS | Task | Duration | Start | Finish | Predecessors |
| --- | --- | --- | --- | --- | --- | --- |
| RHD4HOASZ8SUBLV160 |  | Prepare and Submit As-Built Drawings for Low Voltage Network for LV-Z8-SUB | 8d | 2027-07-24 | 2027-08-01 | RHD4HOASZ7SUBLV160, RHD4GNLVZ8FT1500 |
| RHD4HOASZ8SUBST110 |  | Prepare and Submit As-Built Drawings for Storm Water Network for ST-Z8-SUB | 12d | 2028-01-17 | 2028-01-30 | RHD4HOASZ5SUBST110, RHD4HOASZ7SUBST110, RHD4GNSTZ8FT1000 |
| RHD4HOASZ8SUBTC190 |  | Prepare and Submit As-Built Drawings for Telecommunications Network for TC-Z8-SUB | 15d | 2028-02-26 | 2028-03-16 | RHD4HOASZ7SUBTC190, RHD4GNTCZ8FT1800 |
| RHD4HOASZ8SUBMV150 |  | Prepare and Submit As-Built Drawings for Medium Voltage Network for MV-Z8-SUB | 8d | 2028-03-06 | 2028-03-14 | RHD4HOASZ7SUBMV150, RHD4GNMVZ8FT1400 |
| RHD4HOASZ8SUBCCTV210 |  | Prepare and Submit As-Built Drawings for Security Network for CCTV-Z8-SUB | 16d | 2028-03-07 | 2028-03-25 | RHD4CZ7L015CCTV2100, RHD4CZ8A011CCTV6100, RHD4CZ8L04CCTV6100, RHD4CZ8RA04CCTV6100, RHD4HOASZ7SUBCCTV210, RHD4GNCCTVZ8FT2000 |
| RHD4HOASZ8SUBIRR140 |  | Prepare and Submit As-Built Drawings for Irrigation Network for IRR-Z8-SUB | 16d | 2028-03-15 | 2028-04-02 | RHD4HOASZ7SUBIRR140, RHD4GNIRRZ8FT1300 |
| RHD4HOASZ8SUBPT130 |  | Prepare and Submit As-Built Drawings for Potable Water Network for PT-Z8-SUB | 16d | 2028-03-15 | 2028-04-02 | RHD4HOASZ7SUBPT130, RHD4GNPTZ8FT1200 |
| RHD4HOASZ8SUBSW120 |  | Prepare and Submit As-Built Drawings for Sewage Network for SW-Z8-SUB | 12d | 2028-03-25 | 2028-04-06 | RHD4HOASZ7SUBSW120, RHD4HOASZ7SUBSW120 FF, RHD4GNSWZ8FT1100 |
| RHD4HOASZ8SUBSL170 |  | Prepare and Submit As-Built Drawings for Street Lighting Network for SL-Z8-SUB | 15d | 2028-03-30 | 2028-04-16 | RHD4CZ8A011SL6100, RHD4CZ8C014SL6100, RHD4HOASZ7SUBSL170, RHD4GNSLZ8FT1600 |
| RHD4HOASZ8SUBEW100 |  | Prepare and Submit As-Built Drawings for Road Plans and Profile for EW-Z8-SUB | 8d | 2028-04-03 | 2028-04-11 | RHD4HOASZ8SUBRD220 SS, RHD4CZ8C014RD8100, RHD4CZ8A011RD8100, RHD4HOASZ7SUBEW100 |
| RHD4HOASZ8SUBRD220 |  | Prepare and Submit As-Built Drawings for Road Works( KERBING AND PAVEMENT ) for RD-Z8-SUB | 6d | 2028-04-03 | 2028-04-09 | RHD4CZ8A011RD4100, RHD4CZ8C014RD4100, RHD4CZ4L01RD4100, RHD4CZ8L04RD4100, RHD4CZ8RA04RD4100, RHD4CZ8RA04RD9100, RHD4CZ8A011RD7100, RHD4CZ8C014RD7100, RHD4CZ4L01RD7100, RHD4CZ8L04RD7100, RHD4CZ8RA04RD7100, RHD4HOASZ7SUBRD220 |
| RHD4HOASZ8SUBICT200 |  | Prepare and Submit As-Built Drawings for Information and Communication Technologies Network for ICT-Z8-SUB | 8d | 2028-04-19 | 2028-04-27 | RHD4HOASZ7SUBICT200, RHD4GNICTZ8FT1900 |
|  | 9237 | **RHD4-02-002-As Built Drawing Submittals-Z9** |  | 2027-08-12 | 2028-05-10 |  |
| RHD4HOASZ9SUBLV160 |  | Prepare and Submit As-Built Drawings for Low Voltage Network for LV-Z9-SUB | 8d | 2027-08-12 | 2027-08-21 | RHD4HOASZ8SUBLV160, RHD4GNLVZ9FT1500 |
| RHD4HOASZ9SUBRD220 |  | Prepare and Submit As-Built Drawings for Road Works( KERBING AND PAVEMENT ) for RD-Z9-SUB | 6d | 2028-01-20 | 2028-01-26 | RHD4CZ9C071RD4100, RHD4CZ9L02RD4100, RHD4CZ9L05RD4100, RHD4CZ9L06RD4100, RHD4CZ9C071RD7100, RHD4CZ9L02RD7100, RHD4CZ9L05RD7100, RHD4CZ9L06RD7100 |
| RHD4HOASZ9SUBST110 |  | Prepare and Submit As-Built Drawings for Storm Water Network for ST-Z9-SUB | 12d | 2028-01-31 | 2028-02-13 | RHD4HOASZ5SUBST110, RHD4HOASZ8SUBST110, RHD4GNSTZ9FT1000 |
| RHD4HOASZ9SUBMV150 |  | Prepare and Submit As-Built Drawings for Medium Voltage Network for MV-Z9-SUB | 8d | 2028-03-15 | 2028-03-23 | RHD4HOASZ8SUBMV150, RHD4GNMVZ9FT1400 |
| RHD4HOASZ9SUBTC190 |  | Prepare and Submit As-Built Drawings for Telecommunications Network for TC-Z9-SUB | 10d | 2028-03-18 | 2028-03-28 | RHD4CZ9L02TC5200, RHD4HOASZ8SUBTC190, RHD4GNTCZ9FT1800 |
| RHD4HOASZ9SUBCCTV210 |  | Prepare and Submit As-Built Drawings for Security Network for CCTV-Z9-SUB | 16d | 2028-03-26 | 2028-04-12 | RHD4CZ9C071CCTV6100, RHD4CZ9L02CCTV6100, RHD4CZ9L06ICT2400, RHD4CZ9L06TC2400, RHD4HOASZ8SUBCCTV210, RHD4GNCCTVZ9FT2000 |
| RHD4HOASZ9SUBIRR140 |  | Prepare and Submit As-Built Drawings for Irrigation Network for IRR-Z9-SUB | 16d | 2028-04-03 | 2028-04-20 | RHD4HOASZ8SUBIRR140, RHD4GNIRRZ9FT1300 |
| RHD4HOASZ9SUBPT130 |  | Prepare and Submit As-Built Drawings for Potable Water Network for PT-Z9-SUB | 16d | 2028-04-03 | 2028-04-20 | RHD4HOASZ8SUBPT130, RHD4GNPTZ9FT1200 |
| RHD4HOASZ9SUBSW120 |  | Prepare and Submit As-Built Drawings for Sewage Network for SW-Z9-SUB | 12d | 2028-04-08 | 2028-04-20 | RHD4HOASZ8SUBSW120, RHD4HOASZ8SUBSW120 FF, RHD4GNSWZ9FT1100 |
| RHD4HOASZ9SUBEW100 |  | Prepare and Submit As-Built Drawings for Road Plans and Profile for EW-Z9-SUB | 8d | 2028-04-12 | 2028-04-20 | RHD4HOASZ8SUBRD220 SS, RHD4CZ9B36BF2000, RHD4HOASZ8SUBEW100 |
| RHD4HOASZ9SUBSL170 |  | Prepare and Submit As-Built Drawings for Street Lighting Network for SL-Z9-SUB | 15d | 2028-04-17 | 2028-05-03 | RHD4HOASZ8SUBSL170, RHD4GNSLZ9FT1600 |
| RHD4HOASZ9SUBICT200 |  | Prepare and Submit As-Built Drawings for Information and Communication Technologies Network for ICT-Z9-SUB | 8d | 2028-04-29 | 2028-05-10 | RHD4HOASZ8SUBICT200, RHD4GNICTZ9FT1900 |
|  | 9238 | **RHD4-02-002-As Built Drawing Submittals-Tunne 1 - TUN1** |  | 2027-10-04 | 2027-10-17 |  |
| RHD4HOASTUN1SUB1000 |  | Prepare and Submit As-Built Drawings for TUNNEL 1 (PLANS) -Z5 for -TUN1-SUB | 12d | 2027-10-04 | 2027-10-17 | RHD4HOASSWL1SUB1000 |
| RHD4HOASTUN1SUB1100 |  | Prepare and Submit As-Built Drawings for TUNNEL 1 (SECTIONS) -Z5 for -TUN1-SUB | 12d | 2027-10-04 | 2027-10-17 | RHD4CTUN1Z5STG31210, RHD4CTUN1Z5STG31060, RHD4CTUN1Z5STG21310, RHD4CTUN1Z5STG21270, RHD4CTUN1Z5STG21210, RHD4CTUN1Z5STG11060, RHD4CTUN1Z5STG11210, RHD4HOASSWL1SUB1000, RHD4ENMARAPPTU100, RHD4CTUN1Z5STG21060, RHD4CTUN1Z5STG21050, RHD4CTUN1Z5STG21030, RHD4ENMSTUN2010, RHD4CTUN1Z5STG21040 |
| RHD4HOASTUN1SUB1200 |  | Prepare and Submit As-Built Drawings for TUNNEL 1 (BBS) -Z5 for -TUN1-SUB | 12d | 2027-10-04 | 2027-10-17 | RHD4CTUN1Z5STG31210, RHD4CTUN1Z5STG31060, RHD4CTUN1Z5STG21310, RHD4CTUN1Z5STG21270, RHD4CTUN1Z5STG21210, RHD4CTUN1Z5STG11060, RHD4CTUN1Z5STG11210, RHD4HOASSWL1SUB1000, RHD4ENMARAPPTU100, RHD4CTUN1Z5STG21060, RHD4CTUN1Z5STG21050, RHD4CTUN1Z5STG21030, RHD4ENMSTUN2010, RHD4CTUN1Z5STG21040 |
|  | 9240 | **RHD4-02-002-As Built Drawing Submittals-Sewage Lift Station 1 - SWL1** |  | 2027-09-19 | 2027-11-14 |  |
| RHD4HOASSWL1SUB1000 |  | Prepare and Submit As-Built Drawings for Sewage Lift Station 1 - Z3 - Structure Package for -SWL1-SUB | 12d | 2027-09-19 | 2027-10-03 | RHD4CSWL1B07D021007, RHD4CSWL1B07D021010, RHD4CSWL1B07D031039, RHD4CSWL1B07D031043, RHD4CSWL1B07D031047, RHD4CSWL1B07D031054, RHD4CSWL1B07D031173, RHD4CSWL1B07D031170, RHD4CSWL1B07D031188, RHD4CSWL1B07D031199, RHD4CSWL1B07D031209, RHD4GNSWL1LFTSFT1000 SS |
| RHD4HOASSWL1SUB1100 |  | Prepare and Submit As-Built Drawings for Sewage Lift Station 1 - Z3 - Architecture Package for -SWL1-SUB | 12d | 2027-10-04 | 2027-10-17 | RHD4CSWL1B07D091012, RHD4CSWL1B07D091070, RHD4CSWL1B07D071071, RHD4CSWL1B07D071072, RHD4CSWL1B07D071073, RHD4CSWL1B07D071074, RHD4CSWL1B07D071075, RHD4CSWL1B07D071076, RHD4CSWL1B07D091077, RHD4CSWL1B07D091079, RHD4CSWL1B07D091080, RHD4CSWL1B07D091086, RHD4CSWL1B07D091087, RHD4CSWL1B07D091088, RHD4CSWL1B07D101158, RHD4CSWL1B07D101159, RHD4CSWL1B07D101160, RHD4CSWL1B07D101161, RHD4CSWL1B07D101162, RHD4GNSWL1LFTSFT1000 SS, RHD4PRSHLDOSLFS1500, RHD4PRSHLSTAGLFS1500, RHD4CSWL1B07D091077 SS, RHD4HOASSWL1SUB1000, RHD4ENSWL1APPARC1100, RHD4GNPPSD1100, RHD4ENSDSWL1SUB2000, RHD4ENSDZ6SUBRD220, RHD4ENSDSTL1SUB2000 |
| RHD4HOASSWL1SUB1200 |  | Prepare and Submit As-Built Drawings for Sewage Lift Station 1 - Z3 - Mechanical Package for -SWL1-SUB | 12d | 2027-10-18 | 2027-10-31 | RHD4CSWL1B07D151032, RHD4CSWL1B07D151031, RHD4CSWL1B07D151030, RHD4CSWL1B07D151016, RHD4CSWL1B07D151017, RHD4CSWL1B07D151018, RHD4CSWL1B07D151019, RHD4CSWL1B07D151021, RHD4CSWL1B07D151023, RHD4CSWL1B07D151211, RHD4CSWL1B07D151212, RHD4CSWL1B07D151213, RHD4CSWL1B07D151214, RHD4CSWL1B07D151175, RHD4CSWL1B07D151180, RHD4CSWL1B07D151211 FF, RHD4CSWL1B07D151212 FF, RHD4CSWL1B07D151213 FF, RHD4CSWL1B07D151214 FF, RHD4CSWL1B07D151092, RHD4GNSWL1LFTSFT1000 SS, RHD4PRLOLSTAGLFS1100, RHD4PRSHLDOSLFS1800, RHD4PRSHLSTAGLFS1800, RHD4CSWL1B07D151178, RHD4HOASSWL1SUB1100, RHD4ENSWL1APPMEC1200, RHD4GNPPSD1100, RHD4ENSDSWL1SUB3000, RHD4ENSDZ6SUBRD220, RHD4ENSDSTL1SUB3000, RHD4GNCCTVZ2FT2000 |
| RHD4HOASSWL1SUB1300 |  | Prepare and Submit As-Built Drawings for Sewage Lift Station 1 - Z3 - Electrical Package for -SWL1-SUB | 12d | 2027-11-01 | 2027-11-14 | RHD4CSWL1B07D161153, RHD4CSWL1B07D161154, RHD4CSWL1B07D161155, RHD4CSWL1B07D161152, RHD4CSWL1B07D161145, RHD4CSWL1B07D161150, RHD4CSWL1B07D161141, RHD4CSWL1B07D161139, RHD4CSWL1B07D161137, RHD4CSWL1B07D161099, RHD4CSWL1B07D161103, RHD4CSWL1B07D161107, RHD4CSWL1B07D161111, RHD4CSWL1B07D161125, RHD4CSWL1B07D161131, RHD4GNSWL1LFTSFT1000, RHD4PRSHLDOSLFS2600, RHD4PRSHLSTAGLFS2600, RHD4ENSWL1APPELE1300, RHD4CSWL1B07D161108, RHD4HOASSWL1SUB1200 |
|  | 9242 | **RHD4-02-002-As Built Drawing Submittals-Storm Lift Station 1 - STL1** |  | 2028-01-04 | 2028-01-23 |  |
| RHD4HOASSTL1SUB1000 |  | Prepare and Submit As-Built Drawings for Storm Lift Station 1 - Z5 - Structure Package for -STL1-SUB | 6d | 2028-01-04 | 2028-01-10 | RHD4CSTL1B07D021006, RHD4CSTL1B07D021012, RHD4CSTL1B07D021015, RHD4CSTL1B07D031037, RHD4CSTL1B07D031040, RHD4CSTL1B07D031044, RHD4CSTL1B07D031048, RHD4CSTL1B07D031055, RHD4CSTL1B07D031062, RHD4CSTL1B07D031066, RHD4CSTL1B07D031070, RHD4CSTL1B07D031161, RHD4CSTL1B07D031164, RHD4CSTL1B07D031176, RHD4CSTL1B07D151184, RHD4GNSTL1LFTSFT1200 |
| RHD4HOASSTL1SUB1200 |  | Prepare and Submit As-Built Drawings for Storm Lift Station 1 - Z5 - Mechanical Package for -STL1-SUB | 16d | 2028-01-04 | 2028-01-22 | RHD4CSTL1B07D151023, RHD4CSTL1B07D151026, RHD4CSTL1B07D151027, RHD4CSTL1B07D151029, RHD4CSTL1B07D151030, RHD4CSTL1B07D151032, RHD4CSTL1B07D151033, RHD4CSTL1B07D151091, RHD4CSTL1B07D151092, RHD4CSTL1B07D151094, RHD4CSTL1B07D151093, RHD4CSTL1B07D151095, RHD4CSTL1B07D151096, RHD4CSTL1B07D151170, RHD4GNSTL1LFTSFT1200 |
| RHD4HOASSTL1SUB1300 |  | Prepare and Submit As-Built Drawings for Storm Lift Station 1 - Z5 - Electrical Package for -STL1-SUB | 14d | 2028-01-04 | 2028-01-19 | RHD4CSTL1B07D161100, RHD4CSTL1B07D161104, RHD4CSTL1B07D161108, RHD4CSTL1B07D161112, RHD4CSTL1B07D161115, RHD4CSTL1B07D161119, RHD4CSTL1B07D161125, RHD4CSTL1B07D161122, RHD4CSTL1B07D161131, RHD4CSTL1B07D161128, RHD4CSTL1B07D161133, RHD4CSTL1B07D161132, RHD4CSTL1B07D161137, RHD4CSTL1B07D161138, RHD4CSTL1B07D161152, RHD4CSTL1B07D161155, RHD4CSTL1B07D151178, RHD4CSTL1B07D151177, RHD4GNSTL1LFTSFT1200, RHD4ENSTL1APPELE1300, RHD4CSTL1B07D161133 SS, RHD4PRSHLDOSLFS2400, RHD4PRSHLSTAGLFS2400 |
| RHD4HOASSTL1SUB1100 |  | Prepare and Submit As-Built Drawings for Storm Lift Station 1 - Z5 - Architecture Package for -STL1-SUB | 6d | 2028-01-17 | 2028-01-23 | RHD4CSTL1B07D021002, RHD4CSTL1B07D021008, RHD4CSTL1B07D021016, RHD4CSTL1B07D051022, RHD4CSTL1B07D031036, RHD4CSTL1B07D031051, RHD4CSTL1B07D071058, RHD4CSTL1B07D071059, RHD4CSTL1B07D091072, RHD4CSTL1B07D071078, RHD4CSTL1B07D091079, RHD4CSTL1B07D091082, RHD4CSTL1B07D091081, RHD4CSTL1B07D091088, RHD4CSTL1B07D091087, RHD4CSTL1B07D091090, RHD4CSTL1B07D031157, RHD4CSTL1B07D031165, RHD4CSTL1B07D021166, RHD4CSTL1B07D031172, RHD4CSTL1B07D151180, RHD4GNSTL1LFTSFT1200, RHD4GNMVZ1FT1400, RHD4GNLVZ1FT1500, RHD4GNCCTVZ1FT2000, RHD4GNMVZ2FT1400, RHD4GNLVZ2FT1500, RHD4GNCCTVZ2FT2000, RHD4GNMVZ3FT1400, RHD4GNLVZ3FT1500, RHD4GNCCTVZ3FT2000, RHD4GNMVZ4FT1400, RHD4GNLVZ4FT1500, RHD4GNCCTVZ4FT2000, RHD4GNMVZ5FT1400, RHD4GNLVZ5FT1500, RHD4GNCCTVZ5FT2000, RHD4GNMVZ6FT1400, RHD4GNLVZ6FT1500, RHD4GNCCTVZ6FT2000, RHD4GNMVZ7FT1400, RHD4GNLVZ7FT1500, RHD4GNCCTVZ7FT2000, RHD4GNMVZ8FT1400, RHD4GNLVZ8FT1500, RHD4GNCCTVZ8FT2000, RHD4GNMVZ9FT1400, RHD4GNLVZ9FT1500, RHD4GNCCTVZ9FT2000, RHD4GNTCZ2FT1800, RHD4GNTCZ3FT1800, RHD4GNPTZ1FT1200, RHD4GNIRRZ1FT1300, RHD4GNPTZ2FT1200, RHD4GNIRRZ2FT1300, RHD4GNPTZ3FT1200, RHD4GNIRRZ3FT1300, RHD4GNPTZ4FT1200, RHD4GNIRRZ4FT1300, RHD4GNPTZ5FT1200, RHD4GNIRRZ5FT1300, RHD4GNPTZ6FT1200, RHD4GNIRRZ6FT1300, RHD4GNPTZ7FT1200, RHD4GNIRRZ7FT1300, RHD4GNPTZ8FT1200, RHD4GNIRRZ8FT1300, RHD4GNPTZ9FT1200, RHD4GNIRRZ9FT1300, RHD4CSTL1B07D051085, RHD4CSTL1B07D091018, RHD4PRSHLDOSLFS1500, RHD4PRSHLSTAGLFS1500, RHD4ENSTL1APPARC1100, RHD4GNPPSD1100, RHD4ENSDZ6SUBRD220, RHD4ENSDSTL1SUB2000 |
|  | 9244 | **RHD4-02-002-As Built Drawing Approvals** |  | 2027-05-20 | 2028-05-30 |  |
|  | 9245 | **RHD4-02-002-As Built Drawing Approvals-Z1** |  | 2027-07-10 | 2028-04-18 |  |
| RHD4HOASZ1APPLV160 |  | Review and Approval of As-Built Drawings for Low Voltage Network for LV-Z1-APP | 8d | 2027-07-10 | 2027-07-18 | RHD4HOASZ2APPLV160, RHD4HOASZ1SUBLV160 |
| RHD4HOASZ1APPTC190 |  | Review and Approval of As-Built Drawings for Telecommunications Network for TC-Z1-APP | 15d | 2028-02-07 | 2028-02-24 | RHD4HOASZ2APPTC190, RHD4HOASZ1SUBTC190 |
| RHD4HOASZ1APPCCTV210 |  | Review and Approval of As-Built Drawings for Security Network for CCTV-Z1-APP | 13d | 2028-02-16 | 2028-03-06 | RHD4HOASZ2APPCCTV210, RHD4HOASZ1SUBCCTV210 |
| RHD4HOASZ1APPMV150 |  | Review and Approval of As-Built Drawings for Medium Voltage Network for MV-Z1-APP | 10d | 2028-02-19 | 2028-03-05 | RHD4HOASZ2APPMV150, RHD4HOASZ1SUBMV150 |
| RHD4HOASZ1APPEW100 |  | Review and Approval of As-Built Drawings for Road Plans and Profile for EW-Z1-APP | 8d | 2028-02-21 | 2028-03-05 | RHD4HOASZ2APPEW100, RHD4HOASZ1SUBEW100 |
| RHD4HOASZ1APPSL170 |  | Review and Approval of As-Built Drawings for Street Lighting Network for SL-Z1-APP | 15d | 2028-03-13 | 2028-03-29 | RHD4HOASZ2APPSL170, RHD4HOASZ2APPSL170 FF, RHD4HOASZ1SUBSL170 |
| RHD4HOASZ1APPST110 |  | Review and Approval of As-Built Drawings for Storm Water Network for ST-Z1-APP | 12d | 2028-03-15 | 2028-03-28 | RHD4HOASZ2APPST110, RHD4HOASZ1SUBST110 |
| RHD4HOASZ1APPIRR140 |  | Review and Approval of As-Built Drawings for Irrigation Network for IRR-Z1-APP | 12d | 2028-03-18 | 2028-03-30 | RHD4HOASZ2APPIRR140, RHD4HOASZ1SUBIRR140 |
| RHD4HOASZ1APPPT130 |  | Review and Approval of As-Built Drawings for Potable Water Network for PT-Z1-APP | 12d | 2028-03-18 | 2028-03-30 | RHD4HOASZ2APPPT130, RHD4HOASZ1SUBPT130 |
| RHD4HOASZ1APPRD220 |  | Review and Approval of As-Built Drawings for Road Works( KERBING AND PAVEMENT ) for RD-Z1-APP | 6d | 2028-03-22 | 2028-03-28 | RHD4HOASZ2APPRD220, RHD4HOASZ1SUBRD220 |
| RHD4HOASZ1APPSW120 |  | Review and Approval of As-Built Drawings for Sewage Network for SW-Z1-APP | 6d | 2028-03-27 | 2028-04-02 | RHD4HOASZ2APPSW120, RHD4HOASZ1SUBSW120 |
| RHD4HOASZ1APPICT200 |  | Review and Approval of As-Built Drawings for Information and Communication Technologies Network for ICT-Z1-APP | 8d | 2028-04-10 | 2028-04-18 | RHD4HOASZ2APPICT200, RHD4HOASZ1SUBICT200 |
|  | 9246 | **RHD4-02-002-As Built Drawing Approvals-Z2** |  | 2027-06-30 | 2028-04-09 |  |
| RHD4HOASZ2APPLV160 |  | Review and Approval of As-Built Drawings for Low Voltage Network for LV-Z2-APP | 8d | 2027-06-30 | 2027-07-08 | RHD4HOASZ3APPLV160, RHD4HOASZ2SUBLV160 |
| RHD4HOASZ2APPTC190 |  | Review and Approval of As-Built Drawings for Telecommunications Network for TC-Z2-APP | 6d | 2028-01-20 | 2028-01-26 | RHD4HOASZ3APPTC190, RHD4HOASZ2SUBTC190 |
| RHD4HOASZ2APPCCTV210 |  | Review and Approval of As-Built Drawings for Security Network for CCTV-Z2-APP | 8d | 2028-02-07 | 2028-02-15 | RHD4HOASZ3APPCCTV210, RHD4HOASZ2SUBCCTV210 |
| RHD4HOASZ2APPMV150 |  | Review and Approval of As-Built Drawings for Medium Voltage Network for MV-Z2-APP | 8d | 2028-02-09 | 2028-02-17 | RHD4HOASZ3APPMV150, RHD4HOASZ2SUBMV150 |
| RHD4HOASZ2APPEW100 |  | Review and Approval of As-Built Drawings for Road Plans and Profile for EW-Z2-APP | 9d | 2028-02-10 | 2028-02-20 | RHD4HOASZ3APPEW100, RHD4HOASZ2SUBEW100 |
| RHD4HOASZ2APPSL170 |  | Review and Approval of As-Built Drawings for Street Lighting Network for SL-Z2-APP | 15d | 2028-02-20 | 2028-03-12 | RHD4HOASZ3APPSL170, RHD4HOASZ3APPSL170 FF, RHD4HOASZ2SUBSL170 |
| RHD4HOASZ2APPST110 |  | Review and Approval of As-Built Drawings for Storm Water Network for ST-Z2-APP | 12d | 2028-03-01 | 2028-03-14 | RHD4HOASZ3APPST110, RHD4HOASZ2SUBST110 |
| RHD4HOASZ2APPIRR140 |  | Review and Approval of As-Built Drawings for Irrigation Network for IRR-Z2-APP | 12d | 2028-03-04 | 2028-03-16 | RHD4HOASZ3APPIRR140, RHD4HOASZ2SUBIRR140 |
| RHD4HOASZ2APPPT130 |  | Review and Approval of As-Built Drawings for Potable Water Network for PT-Z2-APP | 12d | 2028-03-04 | 2028-03-16 | RHD4HOASZ3APPPT130, RHD4HOASZ2SUBPT130 |
| RHD4HOASZ2APPSW120 |  | Review and Approval of As-Built Drawings for Sewage Network for SW-Z2-APP | 16d | 2028-03-08 | 2028-03-26 | RHD4HOASZ3APPSW120, RHD4HOASZ2SUBSW120 |
| RHD4HOASZ2APPRD220 |  | Review and Approval of As-Built Drawings for Road Works( KERBING AND PAVEMENT ) for RD-Z2-APP | 8d | 2028-03-13 | 2028-03-21 | RHD4HOASZ3APPRD220, RHD4HOASZ2SUBRD220 |
| RHD4HOASZ2APPICT200 |  | Review and Approval of As-Built Drawings for Information and Communication Technologies Network for ICT-Z2-APP | 8d | 2028-04-01 | 2028-04-09 | RHD4HOASZ3APPICT200, RHD4HOASZ2SUBICT200 |
|  | 9247 | **RHD4-02-002-As Built Drawing Approvals-Z3** |  | 2027-06-21 | 2028-03-30 |  |
| RHD4HOASZ3APPLV160 |  | Review and Approval of As-Built Drawings for Low Voltage Network for LV-Z3-APP | 8d | 2027-06-21 | 2027-06-29 | RHD4HOASZ4APPLV160, RHD4HOASZ3SUBLV160 |
| RHD4HOASZ3APPTC190 |  | Review and Approval of As-Built Drawings for Telecommunications Network for TC-Z3-APP | 6d | 2028-01-13 | 2028-01-19 | RHD4HOASZ4APPTC190, RHD4HOASZ3SUBTC190 |
| RHD4HOASZ3APPCCTV210 |  | Review and Approval of As-Built Drawings for Security Network for CCTV-Z3-APP | 8d | 2028-01-29 | 2028-02-06 | RHD4HOASZ4APPCCTV210, RHD4HOASZ3SUBCCTV210 |

| ID | WBS | Task | Duration | Start | Finish | Predecessors |
| --- | --- | --- | --- | --- | --- | --- |
| RHD4HOASZ3APPEW100 |  | Review and Approval of As-Built Drawings for Road Plans and Profile for EW-Z3-APP | 10d | 2028-01-30 | 2028-02-09 | RHD4HOASZ4APPEW100, RHD4HOASZ3SUBEW100 |
| RHD4HOASZ3APPMV150 |  | Review and Approval of As-Built Drawings for Medium Voltage Network for MV-Z3-APP | 8d | 2028-01-31 | 2028-02-08 | RHD4HOASZ4APPMV150, RHD4HOASZ3SUBMV150 |
| RHD4HOASZ3APPSL170 |  | Review and Approval of As-Built Drawings for Street Lighting Network for SL-Z3-APP | 15d | 2028-02-02 | 2028-02-19 | RHD4HOASZ4APPSL170, RHD4HOASZ3SUBSL170 |
| RHD4HOASZ3APPST110 |  | Review and Approval of As-Built Drawings for Storm Water Network for ST-Z3-APP | 12d | 2028-02-12 | 2028-02-26 | RHD4HOASZ4APPST110, RHD4HOASZ3SUBST110 |
| RHD4HOASZ3APPIRR140 |  | Review and Approval of As-Built Drawings for Irrigation Network for IRR-Z3-APP | 12d | 2028-02-14 | 2028-03-02 | RHD4HOASZ4APPIRR140, RHD4HOASZ3SUBIRR140 |
| RHD4HOASZ3APPPT130 |  | Review and Approval of As-Built Drawings for Potable Water Network for PT-Z3-APP | 12d | 2028-02-14 | 2028-03-02 | RHD4HOASZ4APPPT130, RHD4HOASZ3SUBPT130 |
| RHD4HOASZ3APPSW120 |  | Review and Approval of As-Built Drawings for Sewage Network for SW-Z3-APP | 6d | 2028-03-01 | 2028-03-07 | RHD4HOASZ4APPSW120, RHD4HOASZ3SUBSW120 |
| RHD4HOASZ3APPRD220 |  | Review and Approval of As-Built Drawings for Road Works( KERBING AND PAVEMENT ) for RD-Z3-APP | 8d | 2028-03-04 | 2028-03-12 | RHD4HOASZ4APPRD220, RHD4HOASZ3SUBRD220 |
| RHD4HOASZ3APPICT200 |  | Review and Approval of As-Built Drawings for Information and Communication Technologies Network for ICT-Z3-APP | 14d | 2028-03-15 | 2028-03-30 | RHD4HOASZ4APPICT200, RHD4HOASZ3SUBICT200 |
|  | 9248 | **RHD4-02-002-As Built Drawing Approvals-Z4** |  | 2027-06-08 | 2028-02-26 |  |
| RHD4HOASZ4APPLV160 |  | Review and Approval of As-Built Drawings for Low Voltage Network for LV-Z4-APP | 8d | 2027-06-08 | 2027-06-16 | RHD4HOASZ6APPLV160, RHD4HOASZ4SUBLV160 |
| RHD4HOASZ4APPSL170 |  | Review and Approval of As-Built Drawings for Street Lighting Network for SL-Z4-APP | 15d | 2027-07-12 | 2027-07-28 | RHD4HOASZ6APPSL170, RHD4HOASZ4SUBSL170 |
| RHD4HOASZ4APPTC190 |  | Review and Approval of As-Built Drawings for Telecommunications Network for TC-Z4-APP | 16d | 2027-11-24 | 2027-12-12 | RHD4HOASZ4APPSL170, RHD4HOASZ6SUBTC190, RHD4HOASZ6APPTC190, RHD4HOASZ4SUBTC190 |
| RHD4HOASZ4APPEW100 |  | Review and Approval of As-Built Drawings for Road Plans and Profile for EW-Z4-APP | 10d | 2028-01-18 | 2028-01-29 | RHD4HOASZ6APPEW100, RHD4HOASZ4SUBEW100 |
| RHD4HOASZ4APPCCTV210 |  | Review and Approval of As-Built Drawings for Security Network for CCTV-Z4-APP | 8d | 2028-01-19 | 2028-01-27 | RHD4HOASZ6APPCCTV210, RHD4HOASZ4SUBCCTV210 |
| RHD4HOASZ4APPMV150 |  | Review and Approval of As-Built Drawings for Medium Voltage Network for MV-Z4-APP | 8d | 2028-01-22 | 2028-01-30 | RHD4HOASZ6APPMV150, RHD4HOASZ4SUBMV150 |
| RHD4HOASZ4APPST110 |  | Review and Approval of As-Built Drawings for Storm Water Network for ST-Z4-APP | 12d | 2028-01-29 | 2028-02-10 | RHD4HOASZ6APPST110, RHD4HOASZ4SUBST110 |
| RHD4HOASZ4APPIRR140 |  | Review and Approval of As-Built Drawings for Irrigation Network for IRR-Z4-APP | 12d | 2028-01-31 | 2028-02-13 | RHD4HOASZ6APPIRR140, RHD4HOASZ4SUBIRR140 |
| RHD4HOASZ4APPPT130 |  | Review and Approval of As-Built Drawings for Potable Water Network for PT-Z4-APP | 12d | 2028-01-31 | 2028-02-13 | RHD4HOASZ6APPPT130, RHD4HOASZ4SUBPT130 |
| RHD4HOASZ4APPICT200 |  | Review and Approval of As-Built Drawings for Information and Communication Technologies Network for ICT-Z4-APP | 16d | 2028-02-05 | 2028-02-23 | RHD4HOASZ6APPICT200, RHD4HOASZ4SUBICT200 |
| RHD4HOASZ4APPRD220 |  | Review and Approval of As-Built Drawings for Road Works( KERBING AND PAVEMENT ) for RD-Z4-APP | 8d | 2028-02-05 | 2028-02-13 | RHD4HOASZ6APPRD220, RHD4HOASZ4SUBRD220 |
| RHD4HOASZ4APPSW120 |  | Review and Approval of As-Built Drawings for Sewage Network for SW-Z4-APP | 12d | 2028-02-12 | 2028-02-26 | RHD4HOASZ6APPSW120, RHD4HOASZ4SUBSW120 |
|  | 9249 | **RHD4-02-002-As Built Drawing Approvals-Z5** |  | 2027-05-20 | 2028-01-25 |  |
| RHD4HOASZ5APPLV160 |  | Review and Approval of As-Built Drawings for Low Voltage Network for LV-Z5-APP | 8d | 2027-05-20 | 2027-05-29 | RHD4HOASZ5SUBLV160 |
| RHD4HOASZ5APPSL170 |  | Review and Approval of As-Built Drawings for Street Lighting Network for SL-Z5-APP | 15d | 2027-08-31 | 2027-09-16 | RHD4HOASZ5SUBSL170 |
| RHD4HOASZ5APPTC190 |  | Review and Approval of As-Built Drawings for Telecommunications Network for TC-Z5-APP | 15d | 2027-10-19 | 2027-11-04 | RHD4HOASZ5SUBTC190 |
| RHD4HOASZ5APPSW120 |  | Review and Approval of As-Built Drawings for Sewage Network for SW-Z5-APP | 12d | 2027-12-18 | 2027-12-30 | RHD4HOASZ5SUBSW120 |
| RHD4HOASZ5APPEW100 |  | Review and Approval of As-Built Drawings for Road Plans and Profile for EW-Z5-APP | 10d | 2027-12-26 | 2028-01-05 | RHD4HOASTUN1APP1000, RHD4HOASZ5SUBEW100 |
| RHD4HOASZ5APPICT200 |  | Review and Approval of As-Built Drawings for Information and Communication Technologies Network for ICT-Z5-APP | 16d | 2027-12-29 | 2028-01-16 | RHD4HOASZ5SUBICT200 |
| RHD4HOASZ5APPCCTV210 |  | Review and Approval of As-Built Drawings for Security Network for CCTV-Z5-APP | 8d | 2028-01-01 | 2028-01-09 | RHD4HOASZ5SUBCCTV210 |
| RHD4HOASZ5APPST110 |  | Review and Approval of As-Built Drawings for Storm Water Network for ST-Z5-APP | 12d | 2028-01-01 | 2028-01-13 | RHD4HOASZ5SUBST110 |
| RHD4HOASZ5APPIRR140 |  | Review and Approval of As-Built Drawings for Irrigation Network for IRR-Z5-APP | 12d | 2028-01-03 | 2028-01-16 | RHD4HOASZ5SUBIRR140 |
| RHD4HOASZ5APPMV150 |  | Review and Approval of As-Built Drawings for Medium Voltage Network for MV-Z5-APP | 8d | 2028-01-03 | 2028-01-11 | RHD4HOASZ5SUBMV150 |
| RHD4HOASZ5APPPT130 |  | Review and Approval of As-Built Drawings for Potable Water Network for PT-Z5-APP | 12d | 2028-01-03 | 2028-01-16 | RHD4HOASZ5SUBPT130 |
| RHD4HOASZ5APPRD220 |  | Review and Approval of As-Built Drawings for Road Works( KERBING AND PAVEMENT ) for RD-Z5-APP | 7d | 2028-01-18 | 2028-01-25 | RHD4HOASZ5SUBRD220 |
|  | 9250 | **RHD4-02-002-As Built Drawing Approvals-Z6** |  | 2027-05-30 | 2028-02-03 |  |
| RHD4HOASZ6APPLV160 |  | Review and Approval of As-Built Drawings for Low Voltage Network for LV-Z6-APP | 8d | 2027-05-30 | 2027-06-07 | RHD4HOASZ5APPLV160, RHD4HOASZ6SUBLV160 |
| RHD4HOASZ6APPSL170 |  | Review and Approval of As-Built Drawings for Street Lighting Network for SL-Z6-APP | 15d | 2027-06-08 | 2027-06-24 | RHD4HOASZ6SUBSL170 |
| RHD4HOASZ6APPTC190 |  | Review and Approval of As-Built Drawings for Telecommunications Network for TC-Z6-APP | 16d | 2027-11-06 | 2027-11-23 | RHD4HOASZ5APPTC190, RHD4HOASZ6SUBTC190 |
| RHD4HOASZ6APPSW120 |  | Review and Approval of As-Built Drawings for Sewage Network for SW-Z6-APP | 12d | 2028-01-03 | 2028-01-16 | RHD4HOASZ5APPSW120, RHD4HOASZ6SUBSW120 |
| RHD4HOASZ6APPEW100 |  | Review and Approval of As-Built Drawings for Road Plans and Profile for EW-Z6-APP | 10d | 2028-01-06 | 2028-01-17 | RHD4CZ6RA01RD9100, RHD4HOASZ5APPEW100, RHD4HOASZ6SUBEW100 |
| RHD4HOASZ6APPCCTV210 |  | Review and Approval of As-Built Drawings for Security Network for CCTV-Z6-APP | 8d | 2028-01-10 | 2028-01-18 | RHD4HOASZ5APPCCTV210, RHD4HOASZ6SUBCCTV210 |
| RHD4HOASZ6APPMV150 |  | Review and Approval of As-Built Drawings for Medium Voltage Network for MV-Z6-APP | 8d | 2028-01-12 | 2028-01-20 | RHD4HOASZ5APPMV150, RHD4HOASZ6SUBMV150 |
| RHD4HOASZ6APPST110 |  | Review and Approval of As-Built Drawings for Storm Water Network for ST-Z6-APP | 12d | 2028-01-15 | 2028-01-27 | RHD4CZ6A015ST4600, RHD4CZ6C052ST4600, RHD4HOASZ5APPST110, RHD4HOASZ6SUBST110 |
| RHD4HOASZ6APPICT200 |  | Review and Approval of As-Built Drawings for Information and Communication Technologies Network for ICT-Z6-APP | 16d | 2028-01-17 | 2028-02-03 | RHD4HOASZ5APPICT200, RHD4HOASZ6SUBICT200 |
| RHD4HOASZ6APPIRR140 |  | Review and Approval of As-Built Drawings for Irrigation Network for IRR-Z6-APP | 12d | 2028-01-17 | 2028-01-30 | RHD4HOASZ5APPIRR140, RHD4HOASZ6SUBIRR140 |
| RHD4HOASZ6APPPT130 |  | Review and Approval of As-Built Drawings for Potable Water Network for PT-Z6-APP | 12d | 2028-01-17 | 2028-01-30 | RHD4HOASZ5APPPT130, RHD4HOASZ6SUBPT130 |
| RHD4HOASZ6APPRD220 |  | Review and Approval of As-Built Drawings for Road Works( KERBING AND PAVEMENT ) for RD-Z6-APP | 8d | 2028-01-26 | 2028-02-03 | RHD4HOASZ5APPRD220, RHD4HOASZ6SUBRD220 |
|  | 9251 | **RHD4-02-002-As Built Drawing Approvals-Z7** |  | 2027-07-24 | 2028-04-27 |  |
| RHD4HOASZ7APPLV160 |  | Review and Approval of As-Built Drawings for Low Voltage Network for LV-Z7-APP | 8d | 2027-07-24 | 2027-08-01 | RHD4HOASZ6APPSL170, RHD4HOASZ1APPLV160, RHD4HOASZ7SUBLV160 |
| RHD4HOASZ7APPTC190 |  | Review and Approval of As-Built Drawings for Telecommunications Network for TC-Z7-APP | 15d | 2028-02-26 | 2028-03-16 | RHD4HOASZ1APPTC190, RHD4HOASZ7SUBTC190 |
| RHD4HOASZ7APPEW100 |  | Review and Approval of As-Built Drawings for Road Plans and Profile for EW-Z7-APP | 10d | 2028-03-06 | 2028-03-16 | RHD4HOASZ1APPEW100, RHD4HOASZ7SUBEW100 |
| RHD4HOASZ7APPMV150 |  | Review and Approval of As-Built Drawings for Medium Voltage Network for MV-Z7-APP | 16d | 2028-03-06 | 2028-03-23 | RHD4HOASZ1APPMV150, RHD4HOASZ7SUBMV150 |
| RHD4HOASZ7APPCCTV210 |  | Review and Approval of As-Built Drawings for Security Network for CCTV-Z7-APP | 16d | 2028-03-07 | 2028-03-25 | RHD4HOASZ1APPCCTV210, RHD4HOASZ7SUBCCTV210 |
| RHD4HOASZ7APPRD220 |  | Review and Approval of As-Built Drawings for Road Works( KERBING AND PAVEMENT ) for RD-Z7-APP | 6d | 2028-03-29 | 2028-04-04 | RHD4HOASZ1APPRD220, RHD4HOASZ7SUBRD220 |
| RHD4HOASZ7APPST110 |  | Review and Approval of As-Built Drawings for Storm Water Network for ST-Z7-APP | 12d | 2028-03-29 | 2028-04-11 | RHD4HOASZ1APPST110, RHD4HOASZ7SUBST110 |
| RHD4HOASZ7APPSL170 |  | Review and Approval of As-Built Drawings for Street Lighting Network for SL-Z7-APP | 15d | 2028-03-30 | 2028-04-16 | RHD4HOASZ1APPSL170, RHD4HOASZ7SUBSL170 |
| RHD4HOASZ7APPIRR140 |  | Review and Approval of As-Built Drawings for Irrigation Network for IRR-Z7-APP | 10d | 2028-04-01 | 2028-04-11 | RHD4HOASZ1APPIRR140, RHD4HOASZ7SUBIRR140 |
| RHD4HOASZ7APPPT130 |  | Review and Approval of As-Built Drawings for Potable Water Network for PT-Z7-APP | 10d | 2028-04-01 | 2028-04-11 | RHD4HOASZ1APPPT130, RHD4HOASZ7SUBPT130 |
| RHD4HOASZ7APPSW120 |  | Review and Approval of As-Built Drawings for Sewage Network for SW-Z7-APP | 8d | 2028-04-03 | 2028-04-11 | RHD4HOASZ1APPSW120, RHD4HOASZ7SUBSW120 |
| RHD4HOASZ7APPICT200 |  | Review and Approval of As-Built Drawings for Information and Communication Technologies Network for ICT-Z7-APP | 8d | 2028-04-19 | 2028-04-27 | RHD4HOASZ1APPICT200, RHD4HOASZ7SUBICT200 |
|  | 9252 | **RHD4-02-002-As Built Drawing Approvals-Z8** |  | 2027-08-02 | 2028-05-10 |  |
| RHD4HOASZ8APPLV160 |  | Review and Approval of As-Built Drawings for Low Voltage Network for LV-Z8-APP | 8d | 2027-08-02 | 2027-08-10 | RHD4HOASZ7APPLV160, RHD4HOASZ8SUBLV160 |
| RHD4HOASZ8APPTC190 |  | Review and Approval of As-Built Drawings for Telecommunications Network for TC-Z8-APP | 15d | 2028-03-18 | 2028-04-03 | RHD4HOASZ7APPTC190, RHD4HOASZ7APPTC190 FF, RHD4HOASZ8SUBTC190 |
| RHD4HOASZ8APPMV150 |  | Review and Approval of As-Built Drawings for Medium Voltage Network for MV-Z8-APP | 16d | 2028-03-25 | 2028-04-11 | RHD4HOASZ7APPMV150, RHD4HOASZ8SUBMV150 |
| RHD4HOASZ8APPCCTV210 |  | Review and Approval of As-Built Drawings for Security Network for CCTV-Z8-APP | 16d | 2028-03-26 | 2028-04-12 | RHD4HOASZ7APPCCTV210, RHD4HOASZ8SUBCCTV210 |
| RHD4HOASZ8APPRD220 |  | Review and Approval of As-Built Drawings for Road Works( KERBING AND PAVEMENT ) for RD-Z8-APP | 12d | 2028-04-10 | 2028-04-23 | RHD4HOASZ8SUBRD220, RHD4HOASZ7APPRD220 |
| RHD4HOASZ8APPEW100 |  | Review and Approval of As-Built Drawings for Road Plans and Profile for EW-Z8-APP | 8d | 2028-04-12 | 2028-04-20 | RHD4HOASZ7APPEW100, RHD4HOASZ8SUBEW100 |
| RHD4HOASZ8APPIRR140 |  | Review and Approval of As-Built Drawings for Irrigation Network for IRR-Z8-APP | 8d | 2028-04-12 | 2028-04-20 | RHD4HOASZ7APPIRR140, RHD4HOASZ8SUBIRR140 |
| RHD4HOASZ8APPPT130 |  | Review and Approval of As-Built Drawings for Potable Water Network for PT-Z8-APP | 8d | 2028-04-12 | 2028-04-20 | RHD4HOASZ7APPPT130, RHD4HOASZ8SUBPT130 |

| ID | WBS | Task | Duration | Start | Finish | Predecessors |
| --- | --- | --- | --- | --- | --- | --- |
| RHD4HOASZ8APPST110 |  | Review and Approval of As-Built Drawings for Storm Water Network for ST-Z8-APP | 8d | 2028-04-12 | 2028-04-20 | RHD4HOASZ7APPST110, RHD4HOASZ8SUBST110 |
| RHD4HOASZ8APPSW120 |  | Review and Approval of As-Built Drawings for Sewage Network for SW-Z8-APP | 8d | 2028-04-12 | 2028-04-20 | RHD4HOASZ7APPSW120, RHD4HOASZ8SUBSW120 |
| RHD4HOASZ8APPSL170 |  | Review and Approval of As-Built Drawings for Street Lighting Network for SL-Z8-APP | 15d | 2028-04-17 | 2028-05-03 | RHD4HOASZ7APPSL170, RHD4HOASZ8SUBSL170 |
| RHD4HOASZ8APPICT200 |  | Review and Approval of As-Built Drawings for Information and Communication Technologies Network for ICT-Z8-APP | 8d | 2028-04-29 | 2028-05-10 | RHD4HOASZ7APPICT200, RHD4HOASZ8SUBICT200 |
|  | 9253 | **RHD4-02-002-As Built Drawing Approvals-Z9** |  | 2027-08-22 | 2028-05-30 |  |
| RHD4HOASZ9APPLV160 |  | Review and Approval of As-Built Drawings for Low Voltage Network for LV-Z9-APP | 8d | 2027-08-22 | 2027-08-30 | RHD4HOASZ8APPLV160, RHD4HOASZ9SUBLV160 |
| RHD4HOASZ9APPTC190 |  | Review and Approval of As-Built Drawings for Telecommunications Network for TC-Z9-APP | 15d | 2028-04-04 | 2028-04-20 | RHD4HOASZ8APPTC190, RHD4HOASZ8APPTC190 FF, RHD4HOASZ9SUBTC190 |
| RHD4HOASZ9APPMV150 |  | Review and Approval of As-Built Drawings for Medium Voltage Network for MV-Z9-APP | 16d | 2028-04-12 | 2028-04-30 | RHD4HOASZ8APPMV150, RHD4HOASZ9SUBMV150 |
| RHD4HOASZ9APPCCTV210 |  | Review and Approval of As-Built Drawings for Security Network for CCTV-Z9-APP | 16d | 2028-04-13 | 2028-05-01 | RHD4HOASZ8APPCCTV210, RHD4HOASZ9SUBCCTV210 |
| RHD4HOASZ9APPEW100 |  | Review and Approval of As-Built Drawings for Road Plans and Profile for EW-Z9-APP | 8d | 2028-04-22 | 2028-04-30 | RHD4HOASZ8APPEW100, RHD4HOASZ9SUBEW100 |
| RHD4HOASZ9APPIRR140 |  | Review and Approval of As-Built Drawings for Irrigation Network for IRR-Z9-APP | 8d | 2028-04-22 | 2028-04-30 | RHD4HOASZ8APPIRR140, RHD4HOASZ9SUBIRR140 |
| RHD4HOASZ9APPPT130 |  | Review and Approval of As-Built Drawings for Potable Water Network for PT-Z9-APP | 8d | 2028-04-22 | 2028-04-30 | RHD4HOASZ8APPPT130, RHD4HOASZ9SUBPT130 |
| RHD4HOASZ9APPST110 |  | Review and Approval of As-Built Drawings for Storm Water Network for ST-Z9-APP | 8d | 2028-04-22 | 2028-04-30 | RHD4HOASZ8APPST110, RHD4HOASZ9SUBST110 |
| RHD4HOASZ9APPSW120 |  | Review and Approval of As-Built Drawings for Sewage Network for SW-Z9-APP | 8d | 2028-04-22 | 2028-04-30 | RHD4HOASZ8APPSW120, RHD4HOASZ9SUBSW120 |
| RHD4HOASZ9APPRD220 |  | Review and Approval of As-Built Drawings for Road Works( KERBING AND PAVEMENT ) for RD-Z9-APP | 16d | 2028-04-24 | 2028-05-15 | RHD4HOASZ8APPRD220, RHD4HOASZ9SUBRD220 |
| RHD4HOASZ9APPSL170 |  | Review and Approval of As-Built Drawings for Street Lighting Network for SL-Z9-APP | 20d | 2028-05-08 | 2028-05-30 | RHD4HOASZ8APPSL170, RHD4HOASZ9SUBSL170 |
| RHD4HOASZ9APPICT200 |  | Review and Approval of As-Built Drawings for Information and Communication Technologies Network for ICT-Z9-APP | 8d | 2028-05-11 | 2028-05-20 | RHD4HOASZ8APPICT200, RHD4HOASZ9SUBICT200 |
|  | 9254 | **RHD4-02-002-As Built Drawing Approvals-Tunne 1 - TUN1** |  | 2027-10-18 | 2027-11-28 |  |
| RHD4HOASTUN1APP1000 |  | Review and Approval of As-Built Drawings for TUNNEL 1 (PLANS) -Z5 for -TUN1-APP | 12d | 2027-10-18 | 2027-10-31 | RHD4HOASZ9APPLV160, RHD4HOASTUN1SUB1000 |
| RHD4HOASTUN1APP1100 |  | Review and Approval of As-Built Drawings for TUNNEL 1 (SECTIONS) -Z5 for -TUN1-APP | 12d | 2027-11-01 | 2027-11-14 | RHD4HOASTUN1APP1000, RHD4HOASTUN1SUB1100 |
| RHD4HOASTUN1APP1200 |  | Review and Approval of As-Built Drawings for TUNNEL 1 (BBS) -Z5 for -TUN1-APP | 12d | 2027-11-15 | 2027-11-28 | RHD4HOASTUN1APP1100, RHD4HOASTUN1SUB1200 |
|  | 9256 | **RHD4-02-002-As Built Drawing Approvals-Sewage Lift Station 1 - SWL1** |  | 2027-10-04 | 2027-11-28 |  |
| RHD4HOASSWL1APP1000 |  | Review and Approval of As-Built Drawings for Sewage Lift Station 1 - Z3 - Structure Package for -SWL1-APP | 12d | 2027-10-04 | 2027-10-17 | RHD4HOASSWL1SUB1000 |
| RHD4HOASSWL1APP1100 |  | Review and Approval of As-Built Drawings for Sewage Lift Station 1 - Z3 - Architecture Package for -SWL1-APP | 12d | 2027-10-18 | 2027-10-31 | RHD4HOASSWL1APP1000, RHD4HOASSWL1SUB1100 |
| RHD4HOASSWL1APP1200 |  | Review and Approval of As-Built Drawings for Sewage Lift Station 1 - Z3 - Mechanical Package for -SWL1-APP | 12d | 2027-11-01 | 2027-11-14 | RHD4HOASSWL1APP1100, RHD4HOASSWL1SUB1200 |
| RHD4HOASSWL1APP1300 |  | Review and Approval of As-Built Drawings for Sewage Lift Station 1 - Z3 - Electrical Package for -SWL1-APP | 12d | 2027-11-15 | 2027-11-28 | RHD4HOASSWL1APP1200, RHD4GNCCTVZ7FT2000, RHD4GNCCTVZ8FT2000, RHD4CZ7L015RD6100, RHD4HOASSWL1SUB1300 |
|  | 9258 | **RHD4-02-002-As Built Drawing Approvals-Storm Lift Station 1 - STL1** |  | 2028-01-11 | 2028-02-09 |  |
| RHD4HOASSTL1APP1000 |  | Review and Approval of As-Built Drawings for Storm Lift Station 1 - Z5 - Structure Package for -STL1-APP | 5d | 2028-01-11 | 2028-01-16 | RHD4HOASSTL1SUB1000 |
| RHD4HOASSTL1APP1100 |  | Review and Approval of As-Built Drawings for Storm Lift Station 1 - Z5 - Architecture Package for -STL1-APP | 5d | 2028-01-24 | 2028-01-29 | RHD4HOASSTL1APP1000, RHD4HOASSTL1SUB1100 |
| RHD4HOASSTL1APP1200 |  | Review and Approval of As-Built Drawings for Storm Lift Station 1 - Z5 - Mechanical Package for -STL1-APP | 5d | 2028-01-30 | 2028-02-03 | RHD4HOASSTL1APP1100, RHD4HOASSTL1SUB1200 |
| RHD4HOASSTL1APP1300 |  | Review and Approval of As-Built Drawings for Storm Lift Station 1 - Z5 - Electrical Package for -STL1-APP | 5d | 2028-02-05 | 2028-02-09 | RHD4HOASSTL1APP1200, RHD4HOASSTL1SUB1300 |
|  | 9260 | **RHD4-02-002-Operational Spares - OS** |  | 2028-02-24 | 2028-03-05 |  |
| RHD4GNHOOS1214 |  | Supply Operational Spares - OS | 6d | 2028-02-24 | 2028-03-05 | RHD4GNHOFM1217 |
|  | 9261 | **RHD4-02-002-Warranties and Guarantees - WG** |  | 2028-03-06 | 2028-03-15 |  |
| RHD4GNHOWG1215 |  | Warranties and Guarantess - WG | 9d | 2028-03-06 | 2028-03-15 | RHD4GNHOOS1214 |
|  | 9262 | **RHD4-02-002-Training and Manuals** |  | 2028-02-14 | 2028-03-19 |  |
|  | 9263 | **RHD4-02-002-Training** |  | 2028-03-16 | 2028-03-19 |  |
| RHD4GNHOFM1216 |  | Training - FM | 3d | 2028-03-16 | 2028-03-19 | RHD4GNHOWG1215 |
|  | 9264 | **RHD4-02-002-Manuals** |  | 2028-02-14 | 2028-02-23 |  |
| RHD4GNHOFM1217 |  | Manuals - FM | 8d | 2028-02-14 | 2028-02-23 | RHD4HOASSTL1APP1300, RHD4HOASZ9SUBST110 |
|  | 9265 | **RHD4-02-002-Demobilization** |  | 2028-05-01 | 2028-05-30 |  |
|  | 9266 | **RHD4-02-002-Demobilization of Manpoer** |  | 2028-05-01 | 2028-05-08 |  |
| RHD4GNHODMOB1000 |  | Demobilize Manpower - DMOB | 4d | 2028-05-01 | 2028-05-08 | RHD4GNHOFM1217 SS, RHD4GNHOFM1216 SS, RHD4HOASZ2APPRD220, RHD4HOASZ2APPEW100, RHD4HOASZ2APPPT130, RHD4HOASZ2APPIRR140, RHD4HOASZ2APPICT200, RHD4HOASZ2APPSW120, RHD4HOASZ2APPST110, RHD4HOASZ1APPICT200, RHD4HOASZ1APPIRR140, RHD4HOASZ1APPPT130, RHD4HOASZ1APPEW100, RHD4HOASZ3APPRD220, RHD4HOASZ3APPEW100, RHD4HOASZ4APPRD220, RHD4HOASZ4APPEW100, RHD4HOASZ5APPEW100, RHD4HOASZ9APPEW100, RHD4HOASZ8APPRD220, RHD4HOASZ8APPEW100, RHD4HOASZ6SUBTC190 |
|  | 9267 | **RHD4-02-002-Removal of Euipment from the Site** |  | 2028-05-09 | 2028-05-13 |  |
| RHD4GNHODMOB1100 |  | Removal Equipments from The site - DMOB | 4d | 2028-05-09 | 2028-05-13 | RHD4GNHODMOB1000 |
|  | 9268 | **RHD4-02-002-Site Clean - up** |  | 2028-05-14 | 2028-05-18 |  |
| RHD4GNHODMOB1200 |  | Site Clean Up - DMOB | 5d | 2028-05-14 | 2028-05-18 | RHD4GNHODMOB1100, RHD4GNHOWG1215 |
|  | 9269 | **RHD4-02-002-Removal of Site Offices and Structure** |  | 2028-05-20 | 2028-05-23 |  |
| RHD4GNHODMOB1300 |  | Removal of Site Offices and Structures - DMOB | 4d | 2028-05-20 | 2028-05-23 | RHD4GNHODMOB1200 |
|  | 9270 | **RHD4-02-002-Restoration of Ground Surfaces** |  | 2028-05-24 | 2028-05-30 |  |
| RHD4GNHODMOB1400 |  | Restoration of Ground Surface - DMOB | 6d | 2028-05-24 | 2028-05-30 | RHD4GNHODMOB1300 |

## Version 2 (data date 2026-11-02, saved 2026-11-05, file RHD4-02-002-RVSD01_REV01-10.xer)

Last finish 2028-05-30 → 2029-01-25 (+240d). Complete tasks 0 → 1506.

Changed:

| ID | Task | Start | Finish | Duration | Complete |
| --- | --- | --- | --- | --- | --- |
| RHD4GNPERMITAT1000 | Electrical Network Authorities Permits & Approval - AT | 2025-11-30 A | 2025-12-11 A |  | 0% → 100% |
| RHD4GNPERMITAT2000 | Telecommunication System Authorities Permits & Approval - AT | 2025-12-14 → 2025-11-30 A (-14d) | 2025-12-25 → 2025-12-11 A (-14d) |  | 0% → 100% |
| RHD4GNPERMITENV3000 | Enviromental Permits & Aproval - ENV | 2025-11-30 A | 2026-01-08 A |  | 0% → 100% |
| 3 | **RHD4-02-002-Milestones - MIS** |  | 2028-05-30 → 2029-01-25 (+240d) |  |  |
| 4 | **RHD4-02-002-Contractual Milestones** |  | 2028-05-30 → 2029-01-25 (+240d) |  |  |
| RHD4GNPSMIS1000 | Project Start - MIS | 2025-11-30 A | 2025-11-30 A |  | 0% → 100% |
| RHD4GNMOBMIS1100 | Mobilization Finish - MIS | 2026-01-03 → 2025-12-29 A (-5d) | 2026-01-03 → 2025-12-29 A (-5d) |  | 0% → 100% |
| RHD4GNMRDMIS1200 | Submittal and Approval of Project Management Plan - MIS | 2025-12-29 → 2026-11-16 (+322d) | 2025-12-29 → 2026-11-16 (+322d) |  |  |
| RHD4GNENMIS1300 | Submittal and Approval of Shop Drawings and Material Approvals - MIS | 2026-01-28 → 2026-11-30 (+306d) | 2026-01-28 → 2026-11-30 (+306d) |  |  |
| RHD4GNPROMIS1400 | Completion of material Delivery - MIS - (PO Issuance) | 2026-02-28 → 2026-12-16 (+291d) | 2026-02-28 → 2026-12-16 (+291d) |  |  |
| RHD4GN10MMIS1500 | Roads Finish Milestone - MIS | 2026-09-30 → 2027-05-02 (+214d) | 2026-09-30 → 2027-05-02 (+214d) |  |  |
| RHD4GN10MMIS1510 | Medium Voltage Finish Milestone - MIS | 2027-04-29 → 2027-11-10 (+195d) | 2027-04-29 → 2027-11-10 (+195d) |  |  |
| RHD4GN18MMIS1600 | Deep Network Finish Milestone - MIS | 2027-05-26 → 2027-11-16 (+174d) | 2027-05-26 → 2027-11-16 (+174d) |  |  |
| RHD4GN24MMIS1700 | All Network Finish Milestone - MIS | 2027-11-25 → 2028-07-08 (+226d) | 2027-11-25 → 2028-07-08 (+226d) |  |  |
| RHD4GNPFMIS1800 | Project Finish - MIS | 2028-05-30 → 2029-01-25 (+240d) | 2028-05-30 → 2029-01-25 (+240d) |  |  |
| 9 | **RHD4-02-002-Preliminaries - PP** |  | 2025-12-29 → 2026-11-16 (+322d) |  |  |
| RHD4GNPPSoL1000 | Prepare & Submit Soil Investigation - PP | 2025-11-30 A | 2025-12-06 A |  | 0% → 100% |
| RHD4GNPPSoL1100 | Review & approval Soil Investigation - PP | 2025-12-07 A | 2025-12-13 A |  | 0% → 100% |
| RHD4GNPPSuv1000 | Prepare & Submit Land surveying works - PP | 2025-11-30 A | 2025-12-06 A |  | 0% → 100% |
| RHD4GNPPSuv1100 | Review & approval Land surveying works - PP | 2025-12-07 A | 2025-12-13 A |  | 0% → 100% |
| 12 | **RHD4-02-002-Shop Drawings Submission Plan** |  | 2025-12-14 → 2026-07-07 (+205d) |  |  |
| RHD4GNPPSD1000 | Prepare & Submit Shop Drawings Submission Plan - PP | 2025-11-30 A | 2025-12-07 → 2026-07-01 A (+206d) |  | 0% → 100% |
| RHD4GNPPSD1100 | Review & approval Shop Drawings Submission Plan - PP | 2025-12-08 A | 2025-12-14 → 2026-07-07 A (+205d) |  | 0% → 100% |
| 13 | **RHD4-02-002-Material submittal plan** |  | 2025-12-11 → 2026-09-30 (+293d) |  |  |
| RHD4GNPPMAT1000 | Prepare & Submit Material submittal plan - PP(Completed) | 2025-11-30 A | 2025-12-07 → 2026-08-03 A (+239d) |  | 0% → 100% |
| RHD4GNPPMAT1100 | Review & approval Material submittal plan - PP | 2025-12-08 → 2026-09-27 A (+293d) | 2025-12-11 → 2026-09-30 A (+293d) |  | 0% → 100% |
| 14 | **RHD4-02-002-Project Schedule** |  | 2025-12-17 → 2026-04-26 (+130d) |  |  |
| RHD4GNPPBL1000 | Prepare & Submit Project Schedule - PP | 2025-11-30 A | 2025-12-08 → 2026-04-16 A (+129d) |  | 0% → 100% |
| RHD4GNPPBL1100 | Review & approval Project Schedule - PP | 2025-12-09 A | 2025-12-17 → 2026-04-26 A (+130d) |  | 0% → 100% |
| 15 | **RHD4-02-002-HSE (Health, Safety & Environment) Plan** |  | 2025-12-17 → 2026-01-31 (+45d) |  |  |
| RHD4GNPPHSE1000 | Prepare & Submit HSE (Health, Safety & Environment) Plan - PP | 2025-11-30 A | 2025-12-08 → 2026-01-31 A (+54d) |  | 0% → 100% |
| RHD4GNPPHSE1100 | Review & approval HSE (Health, Safety & Environment) Plan - PP | 2025-12-09 → 2025-12-07 A (-2d) | 2025-12-17 → 2026-01-31 A (+45d) |  | 0% → 100% |
| 16 | **RHD4-02-002-Logistic Plan-Site Mobilization Plan** | 2025-11-30 → 2026-11-03 (+338d) | 2025-12-03 → 2026-11-07 (+339d) |  |  |
| RHD4GNPPLOG1000 | Prepare & Submit Logistic Plan-Site Mobilization Plan - PP | 2025-11-30 → 2026-11-03 (+338d) | 2025-12-01 → 2026-11-04 (+338d) |  |  |
| RHD4GNPPLOG1100 | Review & approval Logistic Plan-Site Mobilization Plan - PP | 2025-12-02 → 2026-11-05 (+338d) | 2025-12-03 → 2026-11-07 (+339d) |  |  |
| 17 | **RHD4-02-002-Organization chart and Recruitment plan** |  | 2025-12-27 → 2026-02-14 (+49d) |  |  |
| RHD4GNPPORG1000 | Prepare & Submit Organization chart and Recruitment plan - PP | 2025-11-30 A | 2025-12-13 → 2026-01-31 A (+49d) |  | 0% → 100% |
| RHD4GNPPORG1100 | Review & approval Organization chart and Recruitment plan - PP | 2025-12-14 A | 2025-12-27 → 2026-02-14 A (+49d) |  | 0% → 100% |
| 18 | **RHD4-02-002-Project management plans** |  | 2025-12-29 → 2026-11-16 (+322d) |  |  |
| RHD4GNPPPMP1000 | Prepare & Submit Project management plans - PP(Completed) | 2025-11-30 A | 2025-12-14 → 2026-08-03 A (+232d) |  | 0% → 100% |
| RHD4GNPPPMP1100 | Review & approval Project management plans - PP | 2025-12-15 → 2026-11-03 (+323d) | 2025-12-29 → 2026-11-16 (+322d) | 13d → 12d |  |
| 8 | **RHD4-02-002-Mobilization - MOB** | 2025-11-30 → 2025-12-04 (+4d) | 2026-01-03 → 2025-12-29 (-5d) |  |  |
| RHD4GNMOB1200 | Access Road works - MOB | 2025-11-30 → 2025-12-04 A (+4d) | 2025-12-15 → 2025-12-17 A (+2d) |  | 0% → 100% |
| RHD4GNMOB1000 | Installing Of Offices - MOB | 2025-12-04 → 2025-12-09 A (+5d) | 2025-12-15 → 2025-12-22 A (+7d) |  | 0% → 100% |
| RHD4GNMOB1300 | Build up Project Store - MOB | 2025-12-16 → 2025-12-18 A (+2d) | 2025-12-22 → 2025-12-24 A (+2d) |  | 0% → 100% |
| RHD4GNMOB1400 | Install of Project Signboard - MOB | 2025-12-16 → 2025-12-18 A (+2d) | 2025-12-22 → 2025-12-24 A (+2d) |  | 0% → 100% |
| RHD4GNMOB1100 | Mobalization Of Equipment - MOB | 2025-12-23 → 2025-12-25 A (+2d) | 2026-01-03 → 2025-12-29 A (-5d) |  | 0% → 100% |
| RHD4GNMOB1500 | Preparation Of Parking Area - MOB | 2025-12-23 → 2025-12-25 A (+2d) | 2025-12-29 A |  | 0% → 100% |
| 20 | **RHD4-02-002-Engineering - EN** |  | 2026-01-28 → 2026-11-30 (+306d) |  |  |
| 83 | **RHD4-02-002-Method Statement - MS** |  | 2026-01-25 → 2026-11-16 (+295d) |  |  |
| 84 | **RHD4-02-002-Earth Works (Excavation, Backfilling) - EW** |  | 2025-12-15 → 2026-01-04 (+20d) |  |  |
| RHD4ENMSEW1000 | Prepare & Submit MS for Earth Works (Excavation, Backfilling) - EW- EW | 2025-11-30 A | 2025-12-07 → 2025-12-28 A (+21d) |  | 0% → 100% |
| RHD4ENMSEW2000 | Review & approval MS for Earth Works (Excavation, Backfilling) - EW- EW | 2025-12-08 → 2025-12-06 A (-2d) | 2025-12-15 → 2026-01-04 A (+20d) |  | 0% → 100% |
| 85 | **RHD4-02-002-Tunnel - TUN** |  | 2025-12-16 → 2026-05-11 (+146d) |  |  |
| RHD4ENMSTUN1000 | Prepare & Submit MS for Tunnel - TUN- TUN | 2025-12-08 A | 2025-12-13 → 2026-05-07 A (+145d) |  | 0% → 100% |
| RHD4ENMSTUN2000 | Review & approval MS for Tunnel - TUN- TUN | 2025-12-14 A | 2025-12-16 → 2026-05-11 A (+146d) |  | 0% → 100% |
| 86 | **RHD4-02-002-Asphalt Works - ASPH** | 2025-12-28 → 2026-01-21 (+24d) | 2026-01-12 → 2026-04-14 (+92d) |  |  |
| RHD4ENMSASPH1000 | Prepare & Submit MS for Asphalt Works - ASPH- ASPH | 2025-12-28 → 2026-01-21 A (+24d) | 2026-01-03 → 2026-04-12 A (+99d) | 6d → 68d | 0% → 100% |
| RHD4ENMSASPH2000 | Review & approval MS for Asphalt Works - ASPH- ASPH | 2026-01-04 → 2026-04-13 A (+99d) | 2026-01-12 → 2026-04-14 A (+92d) | 8d → 2d | 0% → 100% |
| 87 | **RHD4-02-002-Storm Network - ST** |  | 2026-01-05 → 2026-08-03 (+210d) |  |  |
| RHD4ENMSST1000 | Prepare & Submit MS for Storm Network - ST- ST(Completed) | 2025-12-14 A | 2025-12-27 → 2026-08-03 A (+219d) |  | 0% → 100% |
| RHD4ENMSST2000 | Review & approval MS for Storm Network - ST- ST | 2025-12-28 A | 2026-01-05 → 2026-06-28 A (+174d) |  | 0% → 100% |
| 88 | **RHD4-02-002-Sewage Network - SW** | 2025-12-16 → 2025-12-17 (+1d) | 2025-12-31 → 2026-03-04 (+63d) |  |  |
| RHD4ENMSSW1000 | Prepare & Submit MS for Sewage Network - SW- SW | 2025-12-16 → 2025-12-17 A (+1d) | 2025-12-23 → 2026-03-01 A (+68d) |  | 0% → 100% |
| RHD4ENMSSW2000 | Review & approval MS for Sewage Network - SW- SW | 2025-12-24 A | 2025-12-31 → 2026-03-04 A (+63d) |  | 0% → 100% |
| 89 | **RHD4-02-002-Potable Network - PT** |  | 2026-01-03 → 2026-06-04 (+152d) |  |  |
| RHD4ENMSPT1000 | Prepare & Submit MS for Potable Network - PT- PT | 2025-12-24 A | 2025-12-30 → 2026-06-01 A (+153d) |  | 0% → 100% |
| RHD4ENMSPT2000 | Review & approval MS for Potable Network - PT- PT | 2025-12-31 A | 2026-01-03 → 2026-06-04 A (+152d) |  | 0% → 100% |
| 90 | **RHD4-02-002-Irrigation Network - IRR** |  | 2026-01-25 → 2026-05-09 (+104d) |  |  |
| RHD4ENMSRR1000 | Prepare & Submit MS for Irrigation Network - IRR- RR(Completed) | 2025-12-31 A | 2026-01-13 → 2026-04-28 A (+105d) |  | 0% → 100% |

| ID | Task | Start | Finish | Complete |
| --- | --- | --- | --- | --- |
| RHD4ENMSRR2000 | Review & approval MS for Irrigation Network - IRR- RR | 2026-01-14 A | 2026-01-25 → 2026-05-09 A (+104d) | 0% → 100% |
| 91 | **RHD4-02-002-Medium Voltage Cables - MV** | 2026-01-04 → 2026-11-03 (+303d) | 2026-01-17 → 2026-11-16 (+303d) |  |
| RHD4ENMSMV1000 | Prepare & Submit MS for Medium Voltage Cables - MV- MV | 2026-01-04 → 2026-11-03 (+303d) | 2026-01-10 → 2026-11-09 (+303d) |  |
| RHD4ENMSMV2000 | Review & approval MS for Medium Voltage Cables - MV- MV | 2026-01-11 → 2026-11-10 (+303d) | 2026-01-17 → 2026-11-16 (+303d) |  |
| 92 | **RHD4-02-002-Low Voltage Cables - LV** |  | 2025-12-16 → 2026-05-10 (+145d) |  |
| RHD4ENMSLV1000 | Prepare & Submit MS for Low Voltage Cables - LV- LV | 2025-11-30 A | 2025-12-14 → 2026-05-07 A (+144d) | 0% → 100% |
| RHD4ENMSLV2000 | Review & approval MS for Low Voltage Cables - LV- LV | 2025-12-15 A | 2025-12-16 → 2026-05-10 A (+145d) | 0% → 100% |
| 93 | **RHD4-02-002-Street Lighting - SL** |  | 2025-12-16 → 2026-05-10 (+145d) |  |
| RHD4ENMSSL1000 | Prepare & Submit MS for Street Lighting - SL- SL | 2025-11-30 A | 2025-12-14 → 2026-05-07 A (+144d) | 0% → 100% |
| RHD4ENMSSL2000 | Review & approval MS for Street Lighting - SL- SL | 2025-12-15 A | 2025-12-16 → 2026-05-10 A (+145d) | 0% → 100% |
| 94 | **RHD4-02-002-Earthing - ER** |  | 2026-01-24 → 2026-06-13 (+140d) |  |
| RHD4ENMSER1000 | Prepare & Submit MS for Earthing - ER- ER | 2026-01-11 A | 2026-01-17 → 2026-05-19 A (+122d) | 0% → 100% |
| RHD4ENMSER2000 | Review & approval MS for Earthing - ER- ER | 2026-01-18 A | 2026-01-24 → 2026-06-13 A (+140d) | 0% → 100% |
| 95 | **RHD4-02-002-Precast Concrete Curbstone, Interlocking - RD** |  | 2026-01-05 → 2026-06-28 (+174d) |  |
| RHD4ENMSRD1000 | Prepare & Submit MS for Precast Concrete Curbstone, Interlocking - RD- RD(Completed) | 2025-11-30 A | 2025-12-14 → 2026-04-16 A (+123d) | 0% → 100% |
| RHD4ENMSRD2000 | Review & approval MS for Precast Concrete Curbstone, Interlocking - RD- RD | 2026-01-04 A | 2026-01-05 → 2026-06-28 A (+174d) | 0% → 100% |
| 96 | **RHD4-02-002-Precast Box Culvert - BC** |  | 2026-01-08 → 2026-05-14 (+126d) |  |
| RHD4ENMSBC1000 | Prepare & Submit MS for Precast Box Culvert - BC- BC | 2025-12-28 A | 2026-01-01 → 2026-05-07 A (+126d) | 0% → 100% |
| RHD4ENMSBC2000 | Review & approval MS for Precast Box Culvert - BC- BC | 2026-01-03 A | 2026-01-08 → 2026-05-14 A (+126d) | 0% → 100% |
| 1 | **RHD4-02-002-MS Staging Time - STAG** | 2025-12-16 → 2025-12-06 (-10d) | 2026-01-28 → 2026-11-24 (+300d) |  |
| 84 | **RHD4-02-002-Earth Works (Excavation, Backfilling) - EW** | 2025-12-16 → 2025-12-06 (-10d) | 2025-12-23 → 2025-12-13 (-10d) |  |
| RHD4ENMSEW2010 | Staging Time for MS for Earth Works (Excavation, Backfilling) - EW- EW | 2025-12-16 → 2025-12-06 A (-10d) | 2025-12-23 → 2025-12-13 A (-10d) | 0% → 100% |
| 85 | **RHD4-02-002-Tunnel - TUN** |  | 2025-12-24 → 2026-05-19 (+146d) |  |
| RHD4ENMSTUN2010 | Staging Time for MS for Tunnel - TUN- TUN | 2025-12-17 A | 2025-12-24 → 2026-05-19 A (+146d) | 0% → 100% |
| 86 | **RHD4-02-002-Asphalt Works - ASPH** | 2026-01-13 → 2026-09-01 (+231d) | 2026-01-20 → 2026-09-08 (+231d) |  |
| RHD4ENMSASPH2010 | Staging Time for MS for Asphalt Works - ASPH- ASPH | 2026-01-13 → 2026-09-01 A (+231d) | 2026-01-20 → 2026-09-08 A (+231d) | 0% → 100% |
| 87 | **RHD4-02-002-Storm Network - ST** |  | 2026-01-13 → 2026-07-06 (+174d) |  |
| RHD4ENMSST2010 | Staging Time for MS for Storm Network - ST- ST | 2026-01-06 A | 2026-01-13 → 2026-07-06 A (+174d) | 0% → 100% |
| 88 | **RHD4-02-002-Sewage Network - SW** | 2026-01-01 → 2026-01-03 (+2d) | 2026-01-08 → 2026-03-12 (+63d) |  |
| RHD4ENMSSW2010 | Staging Time for MS for Sewage Network - SW- SW | 2026-01-01 → 2026-01-03 A (+2d) | 2026-01-08 → 2026-03-12 A (+63d) | 0% → 100% |
| 89 | **RHD4-02-002-Potable Network - PT** |  | 2026-01-11 → 2026-06-13 (+153d) |  |
| RHD4ENMSPT2010 | Staging Time for MS for Potable Network - PT- PT | 2026-01-04 A | 2026-01-11 → 2026-06-13 A (+153d) | 0% → 100% |
| 90 | **RHD4-02-002-Irrigation Network - IRR** |  | 2026-01-28 → 2026-06-23 (+146d) |  |
| RHD4ENMSRR2010 | Staging Time for MS for Irrigation Network - IRR- RR | 2026-01-26 A | 2026-01-28 → 2026-06-23 A (+146d) | 0% → 100% |
| 91 | **RHD4-02-002-Medium Voltage Cables - MV** | 2026-01-18 → 2026-11-17 (+303d) | 2026-01-25 → 2026-11-24 (+303d) |  |
| RHD4ENMSMV2010 | Staging Time for MS for Medium Voltage Cables - MV- MV | 2026-01-18 → 2026-11-17 (+303d) | 2026-01-25 → 2026-11-24 (+303d) |  |
| 92 | **RHD4-02-002-Low Voltage Cables - LV** |  | 2025-12-21 → 2026-05-14 (+144d) |  |
| RHD4ENMSLV2010 | Staging Time for MS for Low Voltage Cables - LV- LV | 2025-12-17 A | 2025-12-21 → 2026-05-14 A (+144d) | 0% → 100% |
| 93 | **RHD4-02-002-Street Lighting - SL** |  | 2025-12-21 → 2026-05-14 (+144d) |  |
| RHD4ENMSSL2010 | Staging Time for MS for Street Lighting - SL- SL | 2025-12-17 A | 2025-12-21 → 2026-05-14 A (+144d) | 0% → 100% |
| 94 | **RHD4-02-002-Earthing - ER** |  | 2026-01-28 → 2026-08-18 (+202d) |  |
| RHD4ENMSER2010 | Staging Time for MS for Earthing - ER- ER | 2026-01-25 A | 2026-01-28 → 2026-08-18 A (+202d) | 0% → 100% |
| 95 | **RHD4-02-002-Precast Concrete Curbstone, Interlocking - RD** |  | 2026-01-13 → 2026-07-06 (+174d) |  |
| RHD4ENMSRD2010 | Staging Time for MS for Precast Concrete Curbstone, Interlocking - RD- RD | 2026-01-06 A | 2026-01-13 → 2026-07-06 A (+174d) | 0% → 100% |
| 96 | **RHD4-02-002-Precast Box Culvert - BC** |  | 2026-01-17 → 2026-05-23 (+126d) |  |
| RHD4ENMSBC2010 | Staging Time for MS for Precast Box Culvert - BC- BC | 2026-01-10 A | 2026-01-17 → 2026-05-23 A (+126d) | 0% → 100% |
| 21 | **RHD4-02-002-Shop Drawings - SD** |  | 2026-01-28 → 2026-11-23 (+299d) |  |
| 22 | **RHD4-02-002-Shop Drawing Submittals - SUB** |  | 2026-01-25 → 2026-11-09 (+288d) |  |
| 23 | **RHD4-02-002-Shop Drawing Submittals - SUB-Z1** |  | 2026-01-11 → 2026-11-09 (+302d) |  |
| RHD4ENSDZ1SUBST110 | Prepare and Submit Shop Drawings for Storm Water Network for ST-Z1-SUB | 2025-12-14 A | 2025-12-20 → 2026-02-02 A (+44d) | 0% → 100% |
| RHD4ENSDZ1SUBSW120 | Prepare and Submit Shop Drawings for Sewage Network for SW-Z1-SUB | 2025-12-14 A | 2025-12-20 → 2026-02-11 A (+53d) | 0% → 100% |
| RHD4ENSDZ1SUBEW100 | Prepare and Submit Shop Drawings for Road Plans and Profile for EW-Z1-SUB | 2025-12-14 → 2025-12-20 A (+6d) | 2025-12-20 → 2026-07-05 A (+197d) | 0% → 100% |
| RHD4ENSDZ1SUBRD220 | Prepare and Submit Shop Drawings for Road Works( KERBING AND PAVEMENT ) for RD-Z1-SUB(Completed) | 2026-01-04 → 2025-12-20 A (-15d) | 2026-01-11 → 2026-05-11 A (+120d) | 0% → 100% |
| RHD4ENSDZ1SUBPT130 | Prepare and Submit Shop Drawings for Potable Water Network for PT-Z1-SUB | 2025-12-21 A | 2025-12-27 → 2026-02-12 A (+47d) | 0% → 100% |
| RHD4ENSDZ1SUBIRR140 | Prepare and Submit Shop Drawings for Irrigation Network for IRR-Z1-SUB | 2025-12-28 A | 2026-01-03 → 2026-02-18 A (+46d) | 0% → 100% |
| RHD4ENSDZ1SUBCCTV210 | Prepare and Submit Shop Drawings for Security Network for CCTV-Z1-SUB | 2026-01-04 A | 2026-01-10 → 2026-03-03 A (+52d) | 0% → 100% |
| RHD4ENSDZ1SUBICT200 | Prepare and Submit Shop Drawings for Information and Communication Technologies Network for ICT-Z1-SUB | 2026-01-04 A | 2026-01-10 → 2026-03-03 A (+52d) | 0% → 100% |
| RHD4ENSDZ1SUBLV160 | Prepare and Submit Shop Drawings for Low Voltage Network for LV-Z1-SUB | 2026-01-04 A | 2026-01-10 → 2026-02-26 A (+47d) | 0% → 100% |
| RHD4ENSDZ1SUBSL170 | Prepare and Submit Shop Drawings for Street Lighting Network for SL-Z1-SUB | 2026-01-04 A | 2026-01-10 → 2026-03-01 A (+50d) | 0% → 100% |
| RHD4ENSDZ1SUBTC190 | Prepare and Submit Shop Drawings for Telecommunications Network for TC-Z1-SUB | 2026-01-04 A | 2026-01-10 → 2026-02-25 A (+46d) | 0% → 100% |
| RHD4ENSDZ1SUBMV150 | Prepare and Submit Shop Drawings for Medium Voltage Network for MV-Z1-SUB | 2026-01-04 → 2026-11-03 (+303d) | 2026-01-10 → 2026-11-09 (+303d) |  |
| 24 | **RHD4-02-002-Shop Drawing Submittals - SUB-Z2** | 2025-12-14 → 2025-12-20 (+6d) | 2026-01-14 → 2026-11-09 (+299d) |  |
| RHD4ENSDZ2SUBEW100 | Prepare and Submit Shop Drawings for Road Plans and Profile for SUB-SD-Z2 | 2025-12-14 → 2025-12-20 A (+6d) | 2025-12-21 → 2026-07-05 A (+196d) | 0% → 100% |
| RHD4ENSDZ2SUBRD220 | Prepare and Submit Shop Drawings for Road Works( KERBING AND PAVEMENT ) for SUB-SD-Z2(Completed) | 2026-01-04 → 2025-12-20 A (-15d) | 2026-01-11 → 2026-08-03 A (+204d) | 0% → 100% |
| RHD4ENSDZ2SUBSW120 | Prepare and Submit Shop Drawings for Sewage Network for SUB-SD-Z2 | 2025-12-22 → 2025-12-21 A (-1d) | 2025-12-29 → 2026-02-11 A (+44d) | 0% → 100% |
| RHD4ENSDZ2SUBPT130 | Prepare and Submit Shop Drawings for Potable Water Network for SUB-SD-Z2 | 2025-12-22 A | 2025-12-29 → 2026-02-12 A (+45d) | 0% → 100% |
| RHD4ENSDZ2SUBST110 | Prepare and Submit Shop Drawings for Storm Water Network for SUB-SD-Z2 | 2025-12-22 A | 2025-12-28 → 2026-02-02 A (+36d) | 0% → 100% |
| RHD4ENSDZ2SUBIRR140 | Prepare and Submit Shop Drawings for Irrigation Network for SUB-SD-Z2 | 2025-12-30 A | 2026-01-06 → 2026-02-18 A (+43d) | 0% → 100% |
| RHD4ENSDZ2SUBCCTV210 | Prepare and Submit Shop Drawings for Security Network for SUB-SD-Z2 | 2026-01-04 A | 2026-01-11 → 2026-03-03 A (+51d) | 0% → 100% |
| RHD4ENSDZ2SUBICT200 | Prepare and Submit Shop Drawings for Information and Communication Technologies Network for SUB-SD-Z2 | 2026-01-04 A | 2026-01-11 → 2026-03-03 A (+51d) | 0% → 100% |

| ID | Task | Start | Finish | Duration | Complete |
| --- | --- | --- | --- | --- | --- |
| RHD4ENSDZ2SUBLV160 | Prepare and Submit Shop Drawings for Low Voltage Network for SUB-SD-Z2 | 2026-01-04 A | 2026-01-11 → 2026-02-26 A (+46d) |  | 0% → 100% |
| RHD4ENSDZ2SUBSL170 | Prepare and Submit Shop Drawings for Street Lighting Network for SUB-SD-Z2 | 2026-01-04 A | 2026-01-11 → 2026-03-01 A (+49d) |  | 0% → 100% |
| RHD4ENSDZ2SUBTC190 | Prepare and Submit Shop Drawings for Telecommunications Network for SUB-SD-Z2 | 2026-01-04 A | 2026-01-10 → 2026-03-04 A (+53d) |  | 0% → 100% |
| RHD4ENSDZ2SUBMV150 | Prepare and Submit Shop Drawings for Medium Voltage Network for SUB-SD-Z2 | 2026-01-07 → 2026-11-03 (+300d) | 2026-01-14 → 2026-11-09 (+299d) | 7d → 6d |  |
| 25 | **RHD4-02-002-Shop Drawing Submittals - SUB-Z3** | 2025-12-14 → 2025-12-20 (+6d) | 2026-01-10 → 2026-11-09 (+303d) |  |  |
| RHD4ENSDZ3SUBEW100 | Prepare and Submit Shop Drawings for Road Plans and Profile for SUB-SD-Z3 | 2025-12-14 → 2025-12-20 A (+6d) | 2025-12-20 → 2026-07-08 A (+200d) |  | 0% → 100% |
| RHD4ENSDZ3SUBRD220 | Prepare and Submit Shop Drawings for Road Works( KERBING AND PAVEMENT ) for SUB-SD-Z3 | 2025-12-16 → 2025-12-20 A (+4d) | 2025-12-22 → 2026-07-08 A (+198d) |  | 0% → 100% |
| RHD4ENSDZ3SUBPT130 | Prepare and Submit Shop Drawings for Potable Water Network for SUB-SD-Z3 | 2025-12-21 A | 2025-12-27 → 2026-02-12 A (+47d) |  | 0% → 100% |
| RHD4ENSDZ3SUBST110 | Prepare and Submit Shop Drawings for Storm Water Network for SUB-SD-Z3 | 2025-12-21 A | 2025-12-27 → 2026-02-02 A (+37d) |  | 0% → 100% |
| RHD4ENSDZ3SUBSW120 | Prepare and Submit Shop Drawings for Sewage Network for SUB-SD-Z3 | 2025-12-21 A | 2025-12-27 → 2026-02-11 A (+46d) |  | 0% → 100% |
| RHD4ENSDZ3SUBCCTV210 | Prepare and Submit Shop Drawings for Security Network for SUB-SD-Z3 | 2025-12-23 A | 2025-12-29 → 2026-03-03 A (+64d) |  | 0% → 100% |
| RHD4ENSDZ3SUBICT200 | Prepare and Submit Shop Drawings for Information and Communication Technologies Network for SUB-SD-Z3 | 2025-12-23 A | 2025-12-29 → 2026-03-03 A (+64d) |  | 0% → 100% |
| RHD4ENSDZ3SUBLV160 | Prepare and Submit Shop Drawings for Low Voltage Network for SUB-SD-Z3 | 2025-12-23 A | 2025-12-29 → 2026-02-26 A (+59d) |  | 0% → 100% |
| RHD4ENSDZ3SUBSL170 | Prepare and Submit Shop Drawings for Street Lighting Network for SUB-SD-Z3 | 2025-12-23 A | 2025-12-29 → 2026-03-01 A (+62d) |  | 0% → 100% |
| RHD4ENSDZ3SUBTC190 | Prepare and Submit Shop Drawings for Telecommunications Network for SUB-SD-Z3 | 2025-12-23 A | 2025-12-29 → 2026-03-04 A (+65d) |  | 0% → 100% |
| RHD4ENSDZ3SUBIRR140 | Prepare and Submit Shop Drawings for Irrigation Network for SUB-SD-Z3 | 2025-12-28 A | 2026-01-03 → 2026-02-18 A (+46d) |  | 0% → 100% |
| RHD4ENSDZ3SUBMV150 | Prepare and Submit Shop Drawings for Medium Voltage Network for SUB-SD-Z3 | 2026-01-04 → 2026-11-03 (+303d) | 2026-01-10 → 2026-11-09 (+303d) |  |  |
| 26 | **RHD4-02-002-Shop Drawing Submittals - SUB-Z4** |  | 2026-01-03 → 2026-11-09 (+310d) |  |  |
| RHD4ENSDZ4SUBPT130 | Prepare and Submit Shop Drawings for Potable Water Network for SUB-SD-Z4 | 2025-12-14 A | 2025-12-20 → 2026-02-12 A (+54d) |  | 0% → 100% |
| RHD4ENSDZ4SUBST110 | Prepare and Submit Shop Drawings for Storm Water Network for SUB-SD-Z4 | 2025-12-14 A | 2025-12-20 → 2026-02-02 A (+44d) |  | 0% → 100% |
| RHD4ENSDZ4SUBEW100 | Prepare and Submit Shop Drawings for Road Plans and Profile for SUB-SD-Z4 | 2025-12-14 → 2025-12-20 A (+6d) | 2025-12-23 → 2026-02-02 A (+41d) |  | 0% → 100% |
| RHD4ENSDZ4SUBRD220 | Prepare and Submit Shop Drawings for Road Works( KERBING AND PAVEMENT ) for SUB-SD-Z4 | 2025-12-24 → 2025-12-20 A (-4d) | 2026-01-03 → 2026-02-09 A (+37d) |  | 0% → 100% |
| RHD4ENSDZ4SUBIRR140 | Prepare and Submit Shop Drawings for Irrigation Network for SUB-SD-Z4 | 2025-12-21 A | 2025-12-27 → 2026-02-18 A (+53d) |  | 0% → 100% |
| RHD4ENSDZ4SUBSW120 | Prepare and Submit Shop Drawings for Sewage Network for SUB-SD-Z4 | 2025-12-14 → 2025-12-21 A (+7d) | 2025-12-21 → 2026-02-11 A (+52d) |  | 0% → 100% |
| RHD4ENSDZ4SUBCCTV210 | Prepare and Submit Shop Drawings for Security Network for SUB-SD-Z4 | 2025-12-24 A | 2025-12-31 → 2026-03-03 A (+62d) |  | 0% → 100% |
| RHD4ENSDZ4SUBICT200 | Prepare and Submit Shop Drawings for Information and Communication Technologies Network for SUB-SD-Z4 | 2025-12-24 A | 2025-12-31 → 2026-03-03 A (+62d) |  | 0% → 100% |
| RHD4ENSDZ4SUBLV160 | Prepare and Submit Shop Drawings for Low Voltage Network for SUB-SD-Z4 | 2025-12-24 A | 2025-12-31 → 2026-02-26 A (+57d) |  | 0% → 100% |
| RHD4ENSDZ4SUBSL170 | Prepare and Submit Shop Drawings for Street Lighting Network for SUB-SD-Z4 | 2025-12-24 A | 2025-12-31 → 2026-03-01 A (+60d) |  | 0% → 100% |
| RHD4ENSDZ4SUBTC190 | Prepare and Submit Shop Drawings for Telecommunications Network for SUB-SD-Z4 | 2025-12-24 A | 2025-12-30 → 2026-03-04 A (+64d) |  | 0% → 100% |
| RHD4ENSDZ4SUBMV150 | Prepare and Submit Shop Drawings for Medium Voltage Network for SUB-SD-Z4 | 2025-12-28 → 2026-11-03 (+310d) | 2026-01-03 → 2026-11-09 (+310d) |  |  |
| 27 | **RHD4-02-002-Shop Drawing Submittals - SUB-Z5** |  | 2026-01-03 → 2026-11-09 (+310d) |  |  |
| RHD4ENSDZ5SUBPT130 | Prepare and Submit Shop Drawings for Potable Water Network for SUB-SD-Z5 | 2025-12-14 A | 2025-12-20 → 2026-02-12 A (+54d) |  | 0% → 100% |
| RHD4ENSDZ5SUBST110 | Prepare and Submit Shop Drawings for Storm Water Network for SUB-SD-Z5 | 2025-12-14 A | 2025-12-20 → 2026-02-02 A (+44d) |  | 0% → 100% |
| RHD4ENSDZ5SUBCCTV210 | Prepare and Submit Shop Drawings for Security Network for SUB-SD-Z5 | 2025-12-15 A | 2025-12-22 → 2026-03-03 A (+71d) |  | 0% → 100% |
| RHD4ENSDZ5SUBICT200 | Prepare and Submit Shop Drawings for Information and Communication Technologies Network for SUB-SD-Z5 | 2025-12-15 A | 2025-12-22 → 2026-03-03 A (+71d) |  | 0% → 100% |
| RHD4ENSDZ5SUBLV160 | Prepare and Submit Shop Drawings for Low Voltage Network for SUB-SD-Z5 | 2025-12-15 A | 2025-12-22 → 2026-02-26 A (+66d) |  | 0% → 100% |
| RHD4ENSDZ5SUBSL170 | Prepare and Submit Shop Drawings for Street Lighting Network for SUB-SD-Z5 | 2025-12-15 A | 2025-12-22 → 2026-03-01 A (+69d) |  | 0% → 100% |
| RHD4ENSDZ5SUBTC190 | Prepare and Submit Shop Drawings for Telecommunications Network for SUB-SD-Z5 | 2025-12-15 A | 2025-12-21 → 2026-03-04 A (+73d) |  | 0% → 100% |
| RHD4ENSDZ5SUBEW100 | Prepare and Submit Shop Drawings for Road Plans and Profile for SUB-SD-Z5 | 2025-12-14 → 2025-12-20 A (+6d) | 2025-12-20 → 2026-02-04 A (+46d) |  | 0% → 100% |
| RHD4ENSDZ5SUBRD220 | Prepare and Submit Shop Drawings for Road Works( KERBING AND PAVEMENT ) for SUB-SD-Z5(Completed) | 2025-12-15 → 2025-12-20 A (+5d) | 2025-12-22 → 2026-08-03 A (+224d) |  | 0% → 100% |
| RHD4ENSDZ5SUBIRR140 | Prepare and Submit Shop Drawings for Irrigation Network for SUB-SD-Z5 | 2025-12-21 A | 2025-12-27 → 2026-02-18 A (+53d) |  | 0% → 100% |
| RHD4ENSDZ5SUBSW120 | Prepare and Submit Shop Drawings for Sewage Network for SUB-SD-Z5 | 2025-12-14 → 2025-12-21 A (+7d) | 2025-12-21 → 2026-02-11 A (+52d) |  | 0% → 100% |
| RHD4ENSDZ5SUBMV150 | Prepare and Submit Shop Drawings for Medium Voltage Network for SUB-SD-Z5 | 2025-12-28 → 2026-11-03 (+310d) | 2026-01-03 → 2026-11-09 (+310d) |  |  |
| 28 | **RHD4-02-002-Shop Drawing Submittals - SUB-Z6** |  | 2026-01-03 → 2026-11-09 (+310d) |  |  |
| RHD4ENSDZ6SUBCCTV210 | Prepare and Submit Shop Drawings for Security Network for SUB-SD-Z6 | 2025-12-04 A | 2025-12-11 → 2026-03-03 A (+82d) |  | 0% → 100% |
| RHD4ENSDZ6SUBICT200 | Prepare and Submit Shop Drawings for Information and Communication Technologies Network for SUB-SD-Z6 | 2025-12-04 A | 2025-12-11 → 2026-03-03 A (+82d) |  | 0% → 100% |
| RHD4ENSDZ6SUBLV160 | Prepare and Submit Shop Drawings for Low Voltage Network for SUB-SD-Z6 | 2025-12-04 A | 2025-12-11 → 2026-02-26 A (+77d) |  | 0% → 100% |
| RHD4ENSDZ6SUBRD220 | Prepare and Submit Shop Drawings for Road Works( KERBING AND PAVEMENT ) for SUB-SD-Z6 | 2025-12-04 A | 2025-12-14 → 2026-02-09 A (+57d) |  | 0% → 100% |
| RHD4ENSDZ6SUBSL170 | Prepare and Submit Shop Drawings for Street Lighting Network for SUB-SD-Z6 | 2025-12-04 A | 2025-12-11 → 2026-03-01 A (+80d) |  | 0% → 100% |
| RHD4ENSDZ6SUBTC190 | Prepare and Submit Shop Drawings for Telecommunications Network for SUB-SD-Z6 | 2025-12-04 A | 2025-12-10 → 2026-03-04 A (+84d) |  | 0% → 100% |
| RHD4ENSDZ6SUBPT130 | Prepare and Submit Shop Drawings for Potable Water Network for SUB-SD-Z6 | 2025-12-14 A | 2025-12-20 → 2026-02-12 A (+54d) |  | 0% → 100% |
| RHD4ENSDZ6SUBST110 | Prepare and Submit Shop Drawings for Storm Water Network for SUB-SD-Z6 | 2025-12-14 A | 2025-12-20 → 2026-02-02 A (+44d) |  | 0% → 100% |
| RHD4ENSDZ6SUBEW100 | Prepare and Submit Shop Drawings for Road Plans and Profile for SUB-SD-Z6 | 2025-12-14 → 2025-12-20 A (+6d) | 2025-12-21 → 2026-02-02 A (+43d) |  | 0% → 100% |
| RHD4ENSDZ6SUBIRR140 | Prepare and Submit Shop Drawings for Irrigation Network for SUB-SD-Z6 | 2025-12-21 A | 2025-12-27 → 2026-02-18 A (+53d) |  | 0% → 100% |
| RHD4ENSDZ6SUBSW120 | Prepare and Submit Shop Drawings for Sewage Network for SUB-SD-Z6 | 2025-12-14 → 2025-12-21 A (+7d) | 2025-12-21 → 2026-02-11 A (+52d) |  | 0% → 100% |
| RHD4ENSDZ6SUBMV150 | Prepare and Submit Shop Drawings for Medium Voltage Network for SUB-SD-Z6 | 2025-12-28 → 2026-11-03 (+310d) | 2026-01-03 → 2026-11-09 (+310d) |  |  |
| 29 | **RHD4-02-002-Shop Drawing Submittals - SUB-Z7** |  | 2026-01-03 → 2026-11-09 (+310d) |  |  |
| RHD4ENSDZ7SUBPT130 | Prepare and Submit Shop Drawings for Potable Water Network for SUB-SD-Z7 | 2025-12-14 A | 2025-12-20 → 2026-02-12 A (+54d) |  | 0% → 100% |
| RHD4ENSDZ7SUBST110 | Prepare and Submit Shop Drawings for Storm Water Network for SUB-SD-Z7 | 2025-12-14 A | 2025-12-20 → 2026-02-02 A (+44d) |  | 0% → 100% |
| RHD4ENSDZ7SUBCCTV210 | Prepare and Submit Shop Drawings for Security Network for SUB-SD-Z7 | 2025-12-15 A | 2025-12-22 → 2026-03-03 A (+71d) |  | 0% → 100% |
| RHD4ENSDZ7SUBICT200 | Prepare and Submit Shop Drawings for Information and Communication Technologies Network for SUB-SD-Z7 | 2025-12-15 A | 2025-12-22 → 2026-03-03 A (+71d) |  | 0% → 100% |
| RHD4ENSDZ7SUBLV160 | Prepare and Submit Shop Drawings for Low Voltage Network for SUB-SD-Z7 | 2025-12-15 A | 2025-12-22 → 2026-02-26 A (+66d) |  | 0% → 100% |
| RHD4ENSDZ7SUBSL170 | Prepare and Submit Shop Drawings for Street Lighting Network for SUB-SD-Z7 | 2025-12-15 A | 2025-12-22 → 2026-03-01 A (+69d) |  | 0% → 100% |
| RHD4ENSDZ7SUBTC190 | Prepare and Submit Shop Drawings for Telecommunications Network for SUB-SD-Z7 | 2025-12-15 A | 2025-12-21 → 2026-03-04 A (+73d) |  | 0% → 100% |
| RHD4ENSDZ7SUBEW100 | Prepare and Submit Shop Drawings for Road Plans and Profile for SUB-SD-Z7 | 2025-12-14 → 2025-12-20 A (+6d) | 2025-12-21 → 2026-02-02 A (+43d) |  | 0% → 100% |
| RHD4ENSDZ7SUBRD220 | Prepare and Submit Shop Drawings for Road Works( KERBING AND PAVEMENT ) for SUB-SD-Z7(Completed) | 2025-12-15 → 2025-12-20 A (+5d) | 2025-12-22 → 2026-08-03 A (+224d) |  | 0% → 100% |
| RHD4ENSDZ7SUBIRR140 | Prepare and Submit Shop Drawings for Irrigation Network for SUB-SD-Z7 | 2025-12-21 A | 2025-12-27 → 2026-02-18 A (+53d) |  | 0% → 100% |
| RHD4ENSDZ7SUBSW120 | Prepare and Submit Shop Drawings for Sewage Network for SUB-SD-Z7 | 2025-12-14 → 2025-12-21 A (+7d) | 2025-12-21 → 2026-02-11 A (+52d) |  | 0% → 100% |
| RHD4ENSDZ7SUBMV150 | Prepare and Submit Shop Drawings for Medium Voltage Network for SUB-SD-Z7 | 2025-12-28 → 2026-11-03 (+310d) | 2026-01-03 → 2026-11-09 (+310d) |  |  |
| 30 | **RHD4-02-002-Shop Drawing Submittals - SUB-Z8** | 2025-12-14 → 2025-12-20 (+6d) | 2026-01-11 → 2026-11-09 (+302d) |  |  |

| ID | Task | Start | Finish | Complete | Other |
| --- | --- | --- | --- | --- | --- |
| RHD4ENSDZ8SUBEW100 | Prepare and Submit Shop Drawings for Road Plans and Profile for SUB-SD-Z8 | 2025-12-14 → 2025-12-20 A (+6d) | 2025-12-21 → 2026-07-02 A (+193d) | 0% → 100% |  |
| RHD4ENSDZ8SUBRD220 | Prepare and Submit Shop Drawings for Road Works( KERBING AND PAVEMENT ) for SUB-SD-Z8 | 2025-12-23 → 2025-12-20 A (-3d) | 2025-12-30 → 2026-07-02 A (+184d) | 0% → 100% |  |
| RHD4ENSDZ8SUBSW120 | Prepare and Submit Shop Drawings for Sewage Network for SUB-SD-Z8 | 2025-12-22 → 2025-12-21 A (-1d) | 2025-12-29 → 2026-02-11 A (+44d) | 0% → 100% |  |
| RHD4ENSDZ8SUBPT130 | Prepare and Submit Shop Drawings for Potable Water Network for SUB-SD-Z8 | 2025-12-22 A | 2025-12-28 → 2026-02-12 A (+46d) | 0% → 100% |  |
| RHD4ENSDZ8SUBST110 | Prepare and Submit Shop Drawings for Storm Water Network for SUB-SD-Z8 | 2025-12-22 A | 2025-12-28 → 2026-02-02 A (+36d) | 0% → 100% |  |
| RHD4ENSDZ8SUBIRR140 | Prepare and Submit Shop Drawings for Irrigation Network for SUB-SD-Z8 | 2025-12-29 A | 2026-01-04 → 2026-02-18 A (+45d) | 0% → 100% |  |
| RHD4ENSDZ8SUBCCTV210 | Prepare and Submit Shop Drawings for Security Network for SUB-SD-Z8 | 2025-12-31 A | 2026-01-07 → 2026-03-03 A (+55d) | 0% → 100% |  |
| RHD4ENSDZ8SUBICT200 | Prepare and Submit Shop Drawings for Information and Communication Technologies Network for SUB-SD-Z8 | 2025-12-31 A | 2026-01-07 → 2026-03-03 A (+55d) | 0% → 100% |  |
| RHD4ENSDZ8SUBLV160 | Prepare and Submit Shop Drawings for Low Voltage Network for SUB-SD-Z8 | 2025-12-31 A | 2026-01-07 → 2026-02-26 A (+50d) | 0% → 100% |  |
| RHD4ENSDZ8SUBSL170 | Prepare and Submit Shop Drawings for Street Lighting Network for SUB-SD-Z8 | 2025-12-31 A | 2026-01-07 → 2026-03-01 A (+53d) | 0% → 100% |  |
| RHD4ENSDZ8SUBTC190 | Prepare and Submit Shop Drawings for Telecommunications Network for SUB-SD-Z8 | 2025-12-31 A | 2026-01-06 → 2026-03-04 A (+57d) | 0% → 100% |  |
| RHD4ENSDZ8SUBMV150 | Prepare and Submit Shop Drawings for Medium Voltage Network for SUB-SD-Z8 | 2026-01-05 → 2026-11-03 (+302d) | 2026-01-11 → 2026-11-09 (+302d) |  |  |
| 31 | **RHD4-02-002-Shop Drawing Submittals - SUB-Z9** |  | 2026-01-03 → 2026-11-09 (+310d) |  |  |
| RHD4ENSDZ9SUBPT130 | Prepare and Submit Shop Drawings for Potable Water Network for SUB-SD-Z9 | 2025-12-14 A | 2025-12-20 → 2026-02-12 A (+54d) | 0% → 100% |  |
| RHD4ENSDZ9SUBST110 | Prepare and Submit Shop Drawings for Storm Water Network for SUB-SD-Z9 | 2025-12-14 A | 2025-12-20 → 2026-02-02 A (+44d) | 0% → 100% |  |
| RHD4ENSDZ9SUBCCTV210 | Prepare and Submit Shop Drawings for Security Network for SUB-SD-Z9 | 2025-12-15 A | 2025-12-22 → 2026-03-03 A (+71d) | 0% → 100% |  |
| RHD4ENSDZ9SUBICT200 | Prepare and Submit Shop Drawings for Information and Communication Technologies Network for SUB-SD-Z9 | 2025-12-15 A | 2025-12-22 → 2026-03-03 A (+71d) | 0% → 100% |  |
| RHD4ENSDZ9SUBLV160 | Prepare and Submit Shop Drawings for Low Voltage Network for SUB-SD-Z9 | 2025-12-15 A | 2025-12-22 → 2026-02-26 A (+66d) | 0% → 100% |  |
| RHD4ENSDZ9SUBSL170 | Prepare and Submit Shop Drawings for Street Lighting Network for SUB-SD-Z9 | 2025-12-15 A | 2025-12-22 → 2026-03-01 A (+69d) | 0% → 100% |  |
| RHD4ENSDZ9SUBTC190 | Prepare and Submit Shop Drawings for Telecommunications Network for SUB-SD-Z9 | 2025-12-15 A | 2025-12-21 → 2026-03-04 A (+73d) | 0% → 100% |  |
| RHD4ENSDZ9SUBEW100 | Prepare and Submit Shop Drawings for Road Plans and Profile for SUB-SD-Z9 | 2025-12-14 → 2025-12-20 A (+6d) | 2025-12-21 → 2026-02-02 A (+43d) | 0% → 100% |  |
| RHD4ENSDZ9SUBRD220 | Prepare and Submit Shop Drawings for Road Works( KERBING AND PAVEMENT ) for SUB-SD-Z9(Completed) | 2025-12-15 → 2025-12-20 A (+5d) | 2025-12-22 → 2026-08-03 A (+224d) | 0% → 100% |  |
| RHD4ENSDZ9SUBIRR140 | Prepare and Submit Shop Drawings for Irrigation Network for SUB-SD-Z9 | 2025-12-21 A | 2025-12-27 → 2026-02-18 A (+53d) | 0% → 100% |  |
| RHD4ENSDZ9SUBSW120 | Prepare and Submit Shop Drawings for Sewage Network for SUB-SD-Z9 | 2025-12-14 → 2025-12-21 A (+7d) | 2025-12-21 → 2026-02-11 A (+52d) | 0% → 100% |  |
| RHD4ENSDZ9SUBMV150 | Prepare and Submit Shop Drawings for Medium Voltage Network for SUB-SD-Z9 | 2025-12-28 → 2026-11-03 (+310d) | 2026-01-03 → 2026-11-09 (+310d) |  |  |
| 32 | **RHD4-02-002-Shop Drawing Submittals - SUB-Tunne 1 - TUN1** |  | 2026-01-07 → 2026-08-03 (+208d) |  |  |
| RHD4ENSDTUN1SUB1100 | Prepare and Submit Shop Drawings for TUNNEL 1 (SECTIONS) -Z5 for -TUN1-SUB(Completed) | 2025-12-15 A | 2025-12-22 → 2026-08-03 A (+224d) | 0% → 100% |  |
| RHD4ENSDTUN1SUB1200 | Prepare and Submit Shop Drawings for TUNNEL 1 (BBS) -Z5 for -TUN1-SUB(Completed) | 2025-12-15 A | 2025-12-22 → 2026-08-03 A (+224d) | 0% → 100% |  |
| RHD4ENSDTUN1SUB1000 | Prepare and Submit Shop Drawings for TUNNEL 1 (PLANS) -Z5 for -TUN1-SUB | 2025-12-31 → 2025-12-25 A (-6d) | 2026-01-07 A | 0% → 100% |  |
| 36 | **RHD4-02-002-Shop Drawing Submittals - SUB-Storm Lift Station 1 - STL1** |  | 2026-01-12 → 2026-08-03 (+203d) |  |  |
| RHD4ENSDSTL1SUB2000 | Prepare and Submit Shop Drawings for Storm Lift Station 1 - Z5 - Architecture Package for SD-STL1-SUB(Completed) | 2025-12-15 A | 2025-12-22 → 2026-08-03 A (+224d) | 0% → 100% |  |
| RHD4ENSDSTL1SUB3000 | Prepare and Submit Shop Drawings for Storm Lift Station 1 - Z5 - Mechanical Package for SD-STL1-SUB(Completed) | 2025-12-15 A | 2025-12-22 → 2026-08-03 A (+224d) | 0% → 100% |  |
| RHD4ENSDSTL1SUB1000 | Prepare and Submit Shop Drawings for Storm Lift Station 1 - Z5 - Structure Package for SD-STL1-SUB | 2025-12-16 A | 2025-12-29 → 2026-02-12 A (+45d) | 0% → 100% |  |
| RHD4ENSDSTL1SUB4000 | Prepare and Submit Shop Drawings for Storm Lift Station 1 - Z5 - Electrical Package for SD-STL1-SUB | 2025-12-30 A | 2026-01-12 → 2026-04-05 A (+83d) | 0% → 100% |  |
| 34 | **RHD4-02-002-Shop Drawing Submittals - SUB-Sewage Lift Station 1 - SWL1** |  | 2026-01-25 → 2026-08-03 (+190d) |  |  |
| RHD4ENSDSWL1SUB2000 | Prepare and Submit Shop Drawings for Sewage Lift Station 1 - Z3 - Architecture Package for -SWL1-SUB(Completed) | 2025-12-15 A | 2025-12-22 → 2026-08-03 A (+224d) | 0% → 100% |  |
| RHD4ENSDSWL1SUB3000 | Prepare and Submit Shop Drawings for Sewage Lift Station 1 - Z3 - Mechanical Package for -SWL1-SUB(Completed) | 2025-12-15 A | 2025-12-22 → 2026-08-03 A (+224d) | 0% → 100% | resources Technical Office Engineer [64.02 h]; Document Control [13.48 h] → Technical Office Engineer [64 h]; Document Control [13.48 h] |
| RHD4ENSDSWL1SUB1000 | Prepare and Submit Shop Drawings for Sewage Lift Station 1 - Z3 - Structure Package for -SWL1-SUB | 2025-12-30 A | 2026-01-15 → 2026-02-16 A (+32d) | 0% → 100% |  |
| RHD4ENSDSWL1SUB4000 | Prepare and Submit Shop Drawings for Sewage Lift Station 1 - Z3 - Electrical Package for -SWL1-SUB | 2026-01-13 A | 2026-01-25 → 2026-04-05 A (+70d) | 0% → 100% |  |
| 38 | **RHD4-02-002-Shop Drawing Approvals - APP** |  | 2026-01-28 → 2026-11-23 (+299d) |  |  |
| 39 | **RHD4-02-002-Shop Drawing Approvals - APP-Z1** |  | 2026-01-18 → 2026-11-16 (+302d) |  |  |
| RHD4ENSDZ1APPST110 | Review and Approval of Shop Drawings for Storm Water Network for ST-Z1-APP | 2025-12-21 A | 2025-12-28 → 2026-04-30 A (+123d) | 0% → 100% |  |
| RHD4ENSDZ1APPSW120 | Review and Approval of Shop Drawings for Sewage Network for SW-Z1-APP | 2025-12-21 A | 2025-12-28 → 2026-04-07 A (+100d) | 0% → 100% |  |
| RHD4ENSDZ1APPPT130 | Review and Approval of Shop Drawings for Potable Water Network for PT-Z1-APP | 2025-12-28 A | 2026-01-03 → 2026-08-10 A (+219d) | 0% → 100% |  |
| RHD4ENSDZ1APPIRR140 | Review and Approval of Shop Drawings for Irrigation Network for IRR-Z1-APP | 2026-01-04 A | 2026-01-11 → 2026-04-30 A (+109d) | 0% → 100% |  |
| RHD4ENSDZ1APPRD220 | Review and Approval of Shop Drawings for Road Works( KERBING AND PAVEMENT ) for RD-Z1-APP | 2026-01-04 A | 2026-01-11 → 2026-05-31 A (+140d) | 0% → 100% |  |
| RHD4ENSDZ1APPCCTV210 | Review and Approval of Shop Drawings for Security Network for CCTV-Z1-APP | 2026-01-11 A | 2026-01-18 → 2026-03-08 A (+49d) | 0% → 100% |  |
| RHD4ENSDZ1APPICT200 | Review and Approval of Shop Drawings for Information and Communication Technologies Network for ICT-Z1-APP | 2026-01-11 A | 2026-01-18 → 2026-03-08 A (+49d) | 0% → 100% |  |
| RHD4ENSDZ1APPLV160 | Review and Approval of Shop Drawings for Low Voltage Network for LV-Z1-APP | 2026-01-11 A | 2026-01-18 → 2026-03-11 A (+52d) | 0% → 100% |  |
| RHD4ENSDZ1APPSL170 | Review and Approval of Shop Drawings for Street Lighting Network for SL-Z1-APP | 2026-01-11 A | 2026-01-18 → 2026-03-12 A (+53d) | 0% → 100% |  |
| RHD4ENSDZ1APPTC190 | Review and Approval of Shop Drawings for Telecommunications Network for TC-Z1-APP | 2026-01-11 A | 2026-01-18 → 2026-04-06 A (+78d) | 0% → 100% |  |
| RHD4ENSDZ1APPEW100 | Review and Approval of Shop Drawings for Road Plans and Profile for EW-Z1-APP | 2026-01-12 A | 2026-01-17 → 2026-02-14 A (+28d) | 0% → 100% |  |
| RHD4ENSDZ1APPMV150 | Review and Approval of Shop Drawings for Medium Voltage Network for MV-Z1-APP | 2026-01-12 → 2026-11-10 (+302d) | 2026-01-18 → 2026-11-16 (+302d) |  |  |
| 40 | **RHD4-02-002-Shop Drawing Approvals - APP-Z2** |  | 2026-01-21 → 2026-11-16 (+299d) |  |  |
| RHD4ENSDZ2APPST110 | Review and Approval of Shop Drawings for Storm Water Network for ST-Z2-APP | 2025-12-29 A | 2026-01-05 → 2026-04-30 A (+115d) | 0% → 100% |  |
| RHD4ENSDZ2APPPT130 | Review and Approval of Shop Drawings for Potable Water Network for PT-Z2-APP | 2025-12-30 A | 2026-01-05 → 2026-08-10 A (+217d) | 0% → 100% |  |
| RHD4ENSDZ2APPSW120 | Review and Approval of Shop Drawings for Sewage Network for SW-Z2-APP | 2025-12-30 A | 2026-01-06 → 2026-04-07 A (+91d) | 0% → 100% |  |
| RHD4ENSDZ2APPRD220 | Review and Approval of Shop Drawings for Road Works( KERBING AND PAVEMENT ) for RD-Z2-APP | 2026-01-04 A | 2026-01-11 → 2026-02-09 A (+29d) | 0% → 100% |  |
| RHD4ENSDZ2APPIRR140 | Review and Approval of Shop Drawings for Irrigation Network for IRR-Z2-APP | 2026-01-07 A | 2026-01-14 → 2026-04-30 A (+106d) | 0% → 100% |  |
| RHD4ENSDZ2APPTC190 | Review and Approval of Shop Drawings for Telecommunications Network for TC-Z2-APP | 2026-01-11 A | 2026-01-18 → 2026-04-06 A (+78d) | 0% → 100% |  |
| RHD4ENSDZ2APPCCTV210 | Review and Approval of Shop Drawings for Security Network for CCTV-Z2-APP | 2026-01-12 A | 2026-01-19 → 2026-03-10 A (+50d) | 0% → 100% |  |
| RHD4ENSDZ2APPEW100 | Review and Approval of Shop Drawings for Road Plans and Profile for EW-Z2-APP | 2026-01-12 A | 2026-01-17 → 2026-02-14 A (+28d) | 0% → 100% |  |
| RHD4ENSDZ2APPICT200 | Review and Approval of Shop Drawings for Information and Communication Technologies Network for ICT-Z2-APP | 2026-01-12 A | 2026-01-19 → 2026-03-10 A (+50d) | 0% → 100% |  |
| RHD4ENSDZ2APPLV160 | Review and Approval of Shop Drawings for Low Voltage Network for LV-Z2-APP | 2026-01-12 A | 2026-01-19 → 2026-03-05 A (+45d) | 0% → 100% |  |
| RHD4ENSDZ2APPSL170 | Review and Approval of Shop Drawings for Street Lighting Network for SL-Z2-APP | 2026-01-12 A | 2026-01-19 → 2026-03-08 A (+48d) | 0% → 100% |  |
| RHD4ENSDZ2APPMV150 | Review and Approval of Shop Drawings for Medium Voltage Network for MV-Z2-APP | 2026-01-15 → 2026-11-10 (+299d) | 2026-01-21 → 2026-11-16 (+299d) |  |  |
| 41 | **RHD4-02-002-Shop Drawing Approvals - APP-Z3** |  | 2026-01-17 → 2026-11-16 (+303d) |  |  |
| RHD4ENSDZ3APPRD220 | Review and Approval of Shop Drawings for Road Works( KERBING AND PAVEMENT ) for RD-Z3-APP | 2025-12-23 A | 2025-12-30 → 2026-02-09 A (+41d) | 0% → 100% |  |
| RHD4ENSDZ3APPPT130 | Review and Approval of Shop Drawings for Potable Water Network for PT-Z3-APP | 2025-12-28 A | 2026-01-03 → 2026-08-10 A (+219d) | 0% → 100% |  |
| RHD4ENSDZ3APPST110 | Review and Approval of Shop Drawings for Storm Water Network for ST-Z3-APP | 2025-12-28 A | 2026-01-04 → 2026-04-30 A (+116d) | 0% → 100% |  |

| ID | Task | Start | Finish | Duration | Complete |
| --- | --- | --- | --- | --- | --- |
| RHD4ENSDZ3APPSW120 | Review and Approval of Shop Drawings for Sewage Network for SW-Z3-APP | 2025-12-28 A | 2026-01-04 → 2026-04-07 A (+93d) |  | 0% → 100% |
| RHD4ENSDZ3APPCCTV210 | Review and Approval of Shop Drawings for Security Network for CCTV-Z3-APP | 2025-12-30 A | 2026-01-06 → 2026-03-10 A (+63d) |  | 0% → 100% |
| RHD4ENSDZ3APPICT200 | Review and Approval of Shop Drawings for Information and Communication Technologies Network for ICT-Z3-APP | 2025-12-30 A | 2026-01-06 → 2026-03-10 A (+63d) |  | 0% → 100% |
| RHD4ENSDZ3APPLV160 | Review and Approval of Shop Drawings for Low Voltage Network for LV-Z3-APP | 2025-12-30 A | 2026-01-06 → 2026-03-05 A (+58d) |  | 0% → 100% |
| RHD4ENSDZ3APPSL170 | Review and Approval of Shop Drawings for Street Lighting Network for SL-Z3-APP | 2025-12-30 A | 2026-01-06 → 2026-03-08 A (+61d) |  | 0% → 100% |
| RHD4ENSDZ3APPTC190 | Review and Approval of Shop Drawings for Telecommunications Network for TC-Z3-APP | 2025-12-30 A | 2026-01-06 → 2026-04-06 A (+90d) |  | 0% → 100% |
| RHD4ENSDZ3APPEW100 | Review and Approval of Shop Drawings for Road Plans and Profile for EW-Z3-APP | 2025-12-31 A | 2026-01-05 → 2026-02-14 A (+40d) |  | 0% → 100% |
| RHD4ENSDZ3APPIRR140 | Review and Approval of Shop Drawings for Irrigation Network for IRR-Z3-APP | 2026-01-04 A | 2026-01-11 → 2026-04-30 A (+109d) |  | 0% → 100% |
| RHD4ENSDZ3APPMV150 | Review and Approval of Shop Drawings for Medium Voltage Network for MV-Z3-APP | 2026-01-11 → 2026-11-10 (+303d) | 2026-01-17 → 2026-11-16 (+303d) |  |  |
| 42 | **RHD4-02-002-Shop Drawing Approvals - APP-Z4** |  | 2026-01-10 → 2026-11-16 (+310d) |  |  |
| RHD4ENSDZ4APPEW100 | Review and Approval of Shop Drawings for Road Plans and Profile for EW-Z4-APP | 2025-12-14 A | 2025-12-18 → 2026-02-14 A (+58d) |  | 0% → 100% |
| RHD4ENSDZ4APPPT130 | Review and Approval of Shop Drawings for Potable Water Network for PT-Z4-APP | 2025-12-21 A | 2025-12-27 → 2026-08-10 A (+226d) |  | 0% → 100% |
| RHD4ENSDZ4APPST110 | Review and Approval of Shop Drawings for Storm Water Network for ST-Z4-APP | 2025-12-21 A | 2025-12-28 → 2026-04-30 A (+123d) |  | 0% → 100% |
| RHD4ENSDZ4APPSW120 | Review and Approval of Shop Drawings for Sewage Network for SW-Z4-APP | 2025-12-22 A | 2025-12-29 → 2026-04-07 A (+99d) |  | 0% → 100% |
| RHD4ENSDZ4APPRD220 | Review and Approval of Shop Drawings for Road Works( KERBING AND PAVEMENT ) for RD-Z4-APP | 2025-12-24 A | 2025-12-31 → 2026-02-09 A (+40d) |  | 0% → 100% |
| RHD4ENSDZ4APPIRR140 | Review and Approval of Shop Drawings for Irrigation Network for IRR-Z4-APP | 2025-12-28 A | 2026-01-04 → 2026-04-30 A (+116d) |  | 0% → 100% |
| RHD4ENSDZ4APPTC190 | Review and Approval of Shop Drawings for Telecommunications Network for TC-Z4-APP | 2025-12-31 A | 2026-01-07 → 2026-04-06 A (+89d) |  | 0% → 100% |
| RHD4ENSDZ4APPCCTV210 | Review and Approval of Shop Drawings for Security Network for CCTV-Z4-APP | 2026-01-01 A | 2026-01-08 → 2026-03-10 A (+61d) |  | 0% → 100% |
| RHD4ENSDZ4APPICT200 | Review and Approval of Shop Drawings for Information and Communication Technologies Network for ICT-Z4-APP | 2026-01-01 A | 2026-01-08 → 2026-03-10 A (+61d) |  | 0% → 100% |
| RHD4ENSDZ4APPLV160 | Review and Approval of Shop Drawings for Low Voltage Network for LV-Z4-APP | 2026-01-01 A | 2026-01-08 → 2026-03-05 A (+56d) |  | 0% → 100% |
| RHD4ENSDZ4APPSL170 | Review and Approval of Shop Drawings for Street Lighting Network for SL-Z4-APP | 2026-01-01 A | 2026-01-08 → 2026-03-08 A (+59d) |  | 0% → 100% |
| RHD4ENSDZ4APPMV150 | Review and Approval of Shop Drawings for Medium Voltage Network for MV-Z4-APP | 2026-01-04 → 2026-11-10 (+310d) | 2026-01-10 → 2026-11-16 (+310d) |  |  |
| 43 | **RHD4-02-002-Shop Drawing Approvals - APP-Z5** |  | 2026-01-10 → 2026-11-16 (+310d) |  |  |
| RHD4ENSDZ5APPRD220 | Review and Approval of Shop Drawings for Road Works( KERBING AND PAVEMENT ) for RD-Z5-APP | 2025-12-15 A | 2025-12-22 → 2026-02-09 A (+49d) |  | 0% → 100% |
| RHD4ENSDZ5APPEW100 | Review and Approval of Shop Drawings for Road Plans and Profile for EW-Z5-APP | 2025-12-21 A | 2025-12-25 → 2026-02-14 A (+51d) |  | 0% → 100% |
| RHD4ENSDZ5APPPT130 | Review and Approval of Shop Drawings for Potable Water Network for PT-Z5-APP | 2025-12-21 A | 2025-12-27 → 2026-08-10 A (+226d) |  | 0% → 100% |
| RHD4ENSDZ5APPST110 | Review and Approval of Shop Drawings for Storm Water Network for ST-Z5-APP | 2025-12-21 A | 2025-12-28 → 2026-04-30 A (+123d) |  | 0% → 100% |
| RHD4ENSDZ5APPSW120 | Review and Approval of Shop Drawings for Sewage Network for SW-Z5-APP | 2025-12-22 A | 2025-12-29 → 2026-04-07 A (+99d) |  | 0% → 100% |
| RHD4ENSDZ5APPTC190 | Review and Approval of Shop Drawings for Telecommunications Network for TC-Z5-APP | 2025-12-22 A | 2025-12-29 → 2026-04-06 A (+98d) |  | 0% → 100% |
| RHD4ENSDZ5APPCCTV210 | Review and Approval of Shop Drawings for Security Network for CCTV-Z5-APP | 2025-12-23 A | 2025-12-30 → 2026-03-10 A (+70d) |  | 0% → 100% |
| RHD4ENSDZ5APPICT200 | Review and Approval of Shop Drawings for Information and Communication Technologies Network for ICT-Z5-APP | 2025-12-23 A | 2025-12-30 → 2026-03-10 A (+70d) |  | 0% → 100% |
| RHD4ENSDZ5APPLV160 | Review and Approval of Shop Drawings for Low Voltage Network for LV-Z5-APP | 2025-12-23 A | 2025-12-30 → 2026-03-05 A (+65d) |  | 0% → 100% |
| RHD4ENSDZ5APPSL170 | Review and Approval of Shop Drawings for Street Lighting Network for SL-Z5-APP | 2025-12-23 A | 2025-12-30 → 2026-03-08 A (+68d) |  | 0% → 100% |
| RHD4ENSDZ5APPIRR140 | Review and Approval of Shop Drawings for Irrigation Network for IRR-Z5-APP | 2025-12-28 A | 2026-01-04 → 2026-04-30 A (+116d) |  | 0% → 100% |
| RHD4ENSDZ5APPMV150 | Review and Approval of Shop Drawings for Medium Voltage Network for MV-Z5-APP | 2026-01-04 → 2026-11-10 (+310d) | 2026-01-10 → 2026-11-16 (+310d) |  |  |
| 44 | **RHD4-02-002-Shop Drawing Approvals - APP-Z6** |  | 2026-01-11 → 2026-11-16 (+309d) |  |  |
| RHD4ENSDZ6APPRD220 | Review and Approval of Shop Drawings for Road Works( KERBING AND PAVEMENT ) for RD-Z6-APP | 2025-12-04 A | 2025-12-11 → 2026-02-09 A (+60d) |  | 0% → 100% |
| RHD4ENSDZ6APPTC190 | Review and Approval of Shop Drawings for Telecommunications Network for TC-Z6-APP | 2025-12-11 A | 2025-12-18 → 2026-04-06 A (+109d) |  | 0% → 100% |
| RHD4ENSDZ6APPCCTV210 | Review and Approval of Shop Drawings for Security Network for CCTV-Z6-APP | 2025-12-13 A | 2025-12-20 → 2026-03-10 A (+80d) |  | 0% → 100% |
| RHD4ENSDZ6APPICT200 | Review and Approval of Shop Drawings for Information and Communication Technologies Network for ICT-Z6-APP | 2025-12-13 A | 2025-12-20 → 2026-03-10 A (+80d) |  | 0% → 100% |
| RHD4ENSDZ6APPLV160 | Review and Approval of Shop Drawings for Low Voltage Network for LV-Z6-APP | 2025-12-13 A | 2025-12-20 → 2026-03-05 A (+75d) |  | 0% → 100% |
| RHD4ENSDZ6APPSL170 | Review and Approval of Shop Drawings for Street Lighting Network for SL-Z6-APP | 2025-12-13 A | 2025-12-20 → 2026-03-08 A (+78d) |  | 0% → 100% |
| RHD4ENSDZ6APPPT130 | Review and Approval of Shop Drawings for Potable Water Network for PT-Z6-APP | 2025-12-21 A | 2025-12-28 → 2026-08-10 A (+225d) |  | 0% → 100% |
| RHD4ENSDZ6APPST110 | Review and Approval of Shop Drawings for Storm Water Network for ST-Z6-APP | 2025-12-21 A | 2025-12-28 → 2026-04-30 A (+123d) |  | 0% → 100% |
| RHD4ENSDZ6APPEW100 | Review and Approval of Shop Drawings for Road Plans and Profile for EW-Z6-APP | 2025-12-22 A | 2025-12-29 → 2026-02-14 A (+47d) |  | 0% → 100% |
| RHD4ENSDZ6APPSW120 | Review and Approval of Shop Drawings for Sewage Network for SW-Z6-APP | 2025-12-22 A | 2025-12-29 → 2026-04-07 A (+99d) |  | 0% → 100% |
| RHD4ENSDZ6APPIRR140 | Review and Approval of Shop Drawings for Irrigation Network for IRR-Z6-APP | 2025-12-28 A | 2026-01-04 → 2026-04-30 A (+116d) |  | 0% → 100% |
| RHD4ENSDZ6APPMV150 | Review and Approval of Shop Drawings for Medium Voltage Network for MV-Z6-APP | 2026-01-04 → 2026-11-10 (+310d) | 2026-01-11 → 2026-11-16 (+309d) | 7d → 6d |  |
| 45 | **RHD4-02-002-Shop Drawing Approvals - APP-Z7** |  | 2026-01-11 → 2026-11-16 (+309d) |  |  |
| RHD4ENSDZ7APPRD220 | Review and Approval of Shop Drawings for Road Works( KERBING AND PAVEMENT ) for RD-Z7-APP | 2025-12-15 A | 2025-12-22 → 2026-02-09 A (+49d) |  | 0% → 100% |
| RHD4ENSDZ7APPPT130 | Review and Approval of Shop Drawings for Potable Water Network for PT-Z7-APP | 2025-12-21 A | 2025-12-28 → 2026-08-10 A (+225d) |  | 0% → 100% |
| RHD4ENSDZ7APPST110 | Review and Approval of Shop Drawings for Storm Water Network for ST-Z7-APP | 2025-12-21 A | 2025-12-28 → 2026-04-30 A (+123d) |  | 0% → 100% |
| RHD4ENSDZ7APPEW100 | Review and Approval of Shop Drawings for Road Plans and Profile for EW-Z7-APP | 2025-12-22 A | 2025-12-29 → 2026-02-14 A (+47d) |  | 0% → 100% |
| RHD4ENSDZ7APPSW120 | Review and Approval of Shop Drawings for Sewage Network for SW-Z7-APP | 2025-12-22 A | 2025-12-29 → 2026-04-07 A (+99d) |  | 0% → 100% |
| RHD4ENSDZ7APPTC190 | Review and Approval of Shop Drawings for Telecommunications Network for TC-Z7-APP | 2025-12-22 A | 2025-12-29 → 2026-04-06 A (+98d) |  | 0% → 100% |
| RHD4ENSDZ7APPCCTV210 | Review and Approval of Shop Drawings for Security Network for CCTV-Z7-APP | 2025-12-23 A | 2025-12-30 → 2026-03-10 A (+70d) |  | 0% → 100% |
| RHD4ENSDZ7APPICT200 | Review and Approval of Shop Drawings for Information and Communication Technologies Network for ICT-Z7-APP | 2025-12-23 A | 2025-12-30 → 2026-03-10 A (+70d) |  | 0% → 100% |
| RHD4ENSDZ7APPLV160 | Review and Approval of Shop Drawings for Low Voltage Network for LV-Z7-APP | 2025-12-23 A | 2025-12-30 → 2026-03-05 A (+65d) |  | 0% → 100% |
| RHD4ENSDZ7APPSL170 | Review and Approval of Shop Drawings for Street Lighting Network for SL-Z7-APP | 2025-12-23 A | 2025-12-30 → 2026-03-08 A (+68d) |  | 0% → 100% |
| RHD4ENSDZ7APPIRR140 | Review and Approval of Shop Drawings for Irrigation Network for IRR-Z7-APP | 2025-12-28 A | 2026-01-04 → 2026-04-30 A (+116d) |  | 0% → 100% |
| RHD4ENSDZ7APPMV150 | Review and Approval of Shop Drawings for Medium Voltage Network for MV-Z7-APP | 2026-01-04 → 2026-11-10 (+310d) | 2026-01-11 → 2026-11-16 (+309d) | 7d → 6d |  |
| 46 | **RHD4-02-002-Shop Drawing Approvals - APP-Z8** |  | 2026-01-19 → 2026-11-23 (+308d) |  |  |
| RHD4ENSDZ8APPPT130 | Review and Approval of Shop Drawings for Potable Water Network for PT-Z8-APP | 2025-12-29 A | 2026-01-05 → 2026-08-10 A (+217d) |  | 0% → 100% |
| RHD4ENSDZ8APPST110 | Review and Approval of Shop Drawings for Storm Water Network for ST-Z8-APP | 2025-12-29 A | 2026-01-05 → 2026-04-30 A (+115d) |  | 0% → 100% |
| RHD4ENSDZ8APPSW120 | Review and Approval of Shop Drawings for Sewage Network for SW-Z8-APP | 2025-12-30 A | 2026-01-06 → 2026-04-07 A (+91d) |  | 0% → 100% |
| RHD4ENSDZ8APPRD220 | Review and Approval of Shop Drawings for Road Works( KERBING AND PAVEMENT ) for RD-Z8-APP | 2025-12-31 A | 2026-01-07 → 2026-02-09 A (+33d) |  | 0% → 100% |
| RHD4ENSDZ8APPIRR140 | Review and Approval of Shop Drawings for Irrigation Network for IRR-Z8-APP | 2026-01-05 A | 2026-01-12 → 2026-04-30 A (+108d) |  | 0% → 100% |
| RHD4ENSDZ8APPTC190 | Review and Approval of Shop Drawings for Telecommunications Network for TC-Z8-APP | 2026-01-07 A | 2026-01-14 → 2026-04-06 A (+82d) |  | 0% → 100% |
| RHD4ENSDZ8APPEW100 | Review and Approval of Shop Drawings for Road Plans and Profile for EW-Z8-APP | 2026-01-08 A | 2026-01-15 → 2026-02-14 A (+30d) |  | 0% → 100% |
| RHD4ENSDZ8APPICT200 | Review and Approval of Shop Drawings for Information and Communication Technologies Network for ICT-Z8-APP | 2026-01-08 A | 2026-01-15 → 2026-03-10 A (+54d) |  | 0% → 100% |

| ID | Task | Start | Finish | Duration | Complete |
| --- | --- | --- | --- | --- | --- |
| RHD4ENSDZ8APPLV160 | Review and Approval of Shop Drawings for Low Voltage Network for LV-Z8-APP | 2026-01-08 A | 2026-01-15 → 2026-03-05 A (+49d) |  | 0% → 100% |
| RHD4ENSDZ8APPSL170 | Review and Approval of Shop Drawings for Street Lighting Network for SL-Z8-APP | 2026-01-08 A | 2026-01-15 → 2026-03-08 A (+52d) |  | 0% → 100% |
| RHD4ENSDZ8APPCCTV210 | Review and Approval of Shop Drawings for Security Network for CCTV-Z8-APP | 2026-01-12 A | 2026-01-19 → 2026-03-10 A (+50d) |  | 0% → 100% |
| RHD4ENSDZ8APPMV150 | Review and Approval of Shop Drawings for Medium Voltage Network for MV-Z8-APP | 2026-01-12 → 2026-11-17 (+309d) | 2026-01-19 → 2026-11-23 (+308d) | 7d → 6d |  |
| 47 | **RHD4-02-002-Shop Drawing Approvals - APP-Z9** |  | 2026-01-11 → 2026-11-16 (+309d) |  |  |
| RHD4ENSDZ9APPRD220 | Review and Approval of Shop Drawings for Road Works( KERBING AND PAVEMENT ) for RD-Z9-APP | 2025-12-15 A | 2025-12-22 → 2026-02-09 A (+49d) |  | 0% → 100% |
| RHD4ENSDZ9APPPT130 | Review and Approval of Shop Drawings for Potable Water Network for PT-Z9-APP | 2025-12-21 A | 2025-12-28 → 2026-08-10 A (+225d) |  | 0% → 100% |
| RHD4ENSDZ9APPST110 | Review and Approval of Shop Drawings for Storm Water Network for ST-Z9-APP | 2025-12-21 A | 2025-12-28 → 2026-04-30 A (+123d) |  | 0% → 100% |
| RHD4ENSDZ9APPEW100 | Review and Approval of Shop Drawings for Road Plans and Profile for EW-Z9-APP | 2025-12-22 A | 2025-12-29 → 2026-02-14 A (+47d) |  | 0% → 100% |
| RHD4ENSDZ9APPSW120 | Review and Approval of Shop Drawings for Sewage Network for SW-Z9-APP | 2025-12-22 A | 2025-12-29 → 2026-04-07 A (+99d) |  | 0% → 100% |
| RHD4ENSDZ9APPTC190 | Review and Approval of Shop Drawings for Telecommunications Network for TC-Z9-APP | 2025-12-22 A | 2025-12-29 → 2026-04-06 A (+98d) |  | 0% → 100% |
| RHD4ENSDZ9APPCCTV210 | Review and Approval of Shop Drawings for Security Network for CCTV-Z9-APP | 2025-12-23 A | 2025-12-30 → 2026-03-10 A (+70d) |  | 0% → 100% |
| RHD4ENSDZ9APPICT200 | Review and Approval of Shop Drawings for Information and Communication Technologies Network for ICT-Z9-APP | 2025-12-23 A | 2025-12-30 → 2026-03-10 A (+70d) |  | 0% → 100% |
| RHD4ENSDZ9APPLV160 | Review and Approval of Shop Drawings for Low Voltage Network for LV-Z9-APP | 2025-12-23 A | 2025-12-30 → 2026-03-05 A (+65d) |  | 0% → 100% |
| RHD4ENSDZ9APPSL170 | Review and Approval of Shop Drawings for Street Lighting Network for SL-Z9-APP | 2025-12-23 A | 2025-12-30 → 2026-03-08 A (+68d) |  | 0% → 100% |
| RHD4ENSDZ9APPIRR140 | Review and Approval of Shop Drawings for Irrigation Network for IRR-Z9-APP | 2025-12-28 A | 2026-01-04 → 2026-04-30 A (+116d) |  | 0% → 100% |
| RHD4ENSDZ9APPMV150 | Review and Approval of Shop Drawings for Medium Voltage Network for MV-Z9-APP | 2026-01-04 → 2026-11-10 (+310d) | 2026-01-11 → 2026-11-16 (+309d) | 7d → 6d |  |
| 48 | **RHD4-02-002-Shop Drawing Approvals - APP-Tunne 1 - TUN1** |  | 2026-01-15 → 2026-08-03 (+200d) |  |  |
| RHD4ENTUN1APPSTC1100 | Review and Approval of Shop Drawings for TUNNEL 1 (SECTIONS) -Z5 for STC-TUN1-APP(Completed) | 2025-12-15 A | 2025-12-22 → 2026-08-03 A (+224d) |  | 0% → 100% |
| RHD4ENTUN1APPSTC1200 | Review and Approval of Shop Drawings for TUNNEL 1 (BBS) -Z5 for STC-TUN1-APP(Completed) | 2025-12-15 A | 2025-12-22 → 2026-08-03 A (+224d) |  | 0% → 100% |
| RHD4ENTUN1APPSTC1000 | Review and Approval of Shop Drawings for TUNNEL 1 (PLANS) -Z5 for STC-TUN1-APP | 2026-01-08 → 2025-12-28 A (-11d) | 2026-01-15 → 2026-03-30 A (+74d) |  | 0% → 100% |
| 50 | **RHD4-02-002-Shop Drawing Approvals - APP-Sewage Lift Station 1 - SWL1** |  | 2026-01-28 → 2026-08-03 (+187d) |  |  |
| RHD4ENSWL1APPARC1100 | Review and Approval of Shop Drawings for Sewage Lift Station 1 - Z3 - Architecture Package for ARC-SWL1-APP(Completed) | 2025-12-15 A | 2025-12-22 → 2026-08-03 A (+224d) |  | 0% → 100% |
| RHD4ENSWL1APPMEC1200 | Review and Approval of Shop Drawings for Sewage Lift Station 1 - Z3 - Mechanical Package for MEC-SWL1-APP(Completed) | 2025-12-15 A | 2025-12-22 → 2026-08-03 A (+224d) |  | 0% → 100% |
| RHD4ENSWL1APPSTC1000 | Review and Approval of Shop Drawings for Sewage Lift Station 1 - Z3 - Structure Package for STC-SWL1-APP | 2026-01-15 A | 2026-01-24 → 2026-03-31 A (+66d) |  | 0% → 100% |
| RHD4ENSWL1APPELE1300 | Review and Approval of Shop Drawings for Sewage Lift Station 1 - Z3 - Electrical Package for ELE-SWL1-APP | 2026-01-26 A | 2026-01-28 → 2026-04-07 A (+69d) |  | 0% → 100% |
| 52 | **RHD4-02-002-Shop Drawing Approvals - APP-Storm Lift Station 1 - STL1** |  | 2026-01-15 → 2026-08-03 (+200d) |  |  |
| RHD4ENSTL1APPARC1100 | Review and Approval of Shop Drawings for Storm Lift Station 1 - Z5 - Architecture Package for ARC-STL1-APP(Completed) | 2025-12-15 A | 2025-12-22 → 2026-08-03 A (+224d) |  | 0% → 100% |
| RHD4ENSTL1APPMEC1200 | Review and Approval of Shop Drawings for Storm Lift Station 1 - Z5 - Mechanical Package for MEC-STL1-APP(Completed) | 2025-12-15 A | 2025-12-22 → 2026-08-03 A (+224d) |  | 0% → 100% |
| RHD4ENSTL1APPSTC1000 | Review and Approval of Shop Drawings for Storm Lift Station 1 - Z5 - Structure Package for STC-STL1-APP | 2025-12-30 A | 2026-01-06 → 2026-03-25 A (+78d) |  | 0% → 100% |
| RHD4ENSTL1APPELE1300 | Review and Approval of Shop Drawings for Storm Lift Station 1 - Z5 - Electrical Package for ELE-STL1-APP | 2026-01-13 A | 2026-01-15 → 2026-04-07 A (+82d) |  | 0% → 100% |
| 54 | **RHD4-02-002-Prequalification and Material - MAR** | 2025-12-13 → 2025-12-10 (-3d) | 2026-01-28 → 2026-11-30 (+306d) |  |  |
| 55 | **RHD4-02-002-Submittals of Material and Prequalifications - SUB** | 2025-12-13 → 2025-12-10 (-3d) | 2026-01-24 → 2026-11-23 (+303d) |  |  |
| 1 | **RHD4-02-002-Submittals of Material and Prequalifications - SUB-Earth works Material - EW** | 2026-01-13 → 2026-01-10 (-3d) | 2026-01-19 → 2026-01-15 (-4d) |  |  |
| RHD4ENMARSUBEW100 | Prepare Material Submittal for Earth work Materials - MAR-EW | 2026-01-13 → 2026-01-10 A (-3d) | 2026-01-19 → 2026-01-15 A (-4d) |  | 0% → 100% |
| 56 | **RHD4-02-002-Submittals of Material and Prequalifications - SUB-Storm Network - ST** | 2025-12-16 → 2025-12-10 (-6d) | 2026-01-15 → 2026-04-20 (+95d) |  |  |
| RHD4ENMARSUBST100 | Prepare Material Submittal for GRP pipes - MAR-ST | 2025-12-16 → 2025-12-10 A (-6d) | 2025-12-22 → 2026-02-02 A (+42d) |  | 0% → 100% |
| RHD4ENMARSUBST200 | Prepare Material Submittal for UPVC pipes - MAR-ST | 2025-12-16 → 2025-12-10 A (-6d) | 2025-12-23 → 2026-01-28 A (+36d) |  | 0% → 100% |
| RHD4ENMARSUBST400 | Prepare Material Submittal for Catch basin - MAR-ST | 2025-12-24 → 2025-12-17 A (-7d) | 2025-12-31 → 2026-03-18 A (+77d) |  | 0% → 100% |
| RHD4ENMARSUBST300 | Prepare Material Submittal for HDPE pipes - MAR-ST | 2026-01-01 → 2025-12-24 A (-8d) | 2026-01-08 → 2026-02-02 A (+25d) |  | 0% → 100% |
| RHD4ENMARSUBST700 | Prepare Material Submittal for Precast Concrete - MAR-ST | 2026-01-04 → 2026-01-07 A (+3d) | 2026-01-11 → 2026-03-26 A (+74d) |  | 0% → 100% |
| RHD4ENMARSUBST500 | Prepare Material Submittal for Grouted Riprap - MAR-ST | 2026-01-10 A | 2026-01-12 → 2026-02-09 A (+28d) |  | 0% → 100% |
| RHD4ENMARSUBST600 | Prepare Material Submittal for Tensile reinforcement steel - MAR-ST | 2026-01-10 A | 2026-01-15 → 2026-04-20 A (+95d) |  | 0% → 100% |
| RHD4ENMARSUBST800 | Prepare Material Submittal for Metal Works (Stairs - Manhole Covers) - MAR-ST | 2026-01-12 A | 2026-01-15 → 2026-02-06 A (+22d) |  | 0% → 100% |
| 57 | **RHD4-02-002-Submittals of Material and Prequalifications - SUB-Sewage Network - SW** | 2025-12-23 → 2025-12-17 (-6d) | 2026-01-20 → 2026-03-26 (+65d) |  |  |
| RHD4ENMARSUBSW200 | Prepare Material Submittal for GRP pipes - MAR-SW | 2025-12-23 → 2025-12-17 A (-6d) | 2025-12-29 → 2026-02-02 A (+35d) |  | 0% → 100% |
| RHD4ENMARSUBSW100 | Prepare Material Submittal for UPVC pipes - MAR-SW | 2025-12-30 → 2025-12-24 A (-6d) | 2026-01-06 → 2026-01-28 A (+22d) |  | 0% → 100% |
| RHD4ENMARSUBSW300 | Prepare Material Submittal for Valves - MAR-SW | 2025-12-30 → 2025-12-24 A (-6d) | 2026-01-05 → 2026-01-17 A (+12d) |  | 0% → 100% |
| RHD4ENMARSUBSW400 | Prepare Material Submittal for Precast Concrete - MAR-SW | 2026-01-06 → 2025-12-31 A (-6d) | 2026-01-12 → 2026-03-26 A (+73d) |  | 0% → 100% |
| RHD4ENMARSUBSW600 | Prepare Material Submittal for HDPE pipes - MAR-SW | 2026-01-13 → 2026-01-07 A (-6d) | 2026-01-19 → 2026-02-02 A (+14d) |  | 0% → 100% |
| RHD4ENMARSUBSW500 | Prepare Material Submittal for Metal Works (Stairs - Manhole Covers) - MAR-SW | 2026-01-13 A | 2026-01-20 → 2026-02-09 A (+20d) |  | 0% → 100% |
| 58 | **RHD4-02-002-Submittals of Material and Prequalifications - SUB-Potable Water Network - PT** |  | 2026-01-14 → 2026-11-09 (+299d) |  |  |
| RHD4ENMARSUBPT300 | Prepare Material Submittal for Fire Hydrants - MAR-PT | 2025-12-16 A | 2025-12-22 → 2026-01-17 A (+26d) |  | 0% → 100% |
| RHD4ENMARSUBPT400 | Prepare Material Submittal for Precast Concrete - MAR-PT | 2025-12-23 A | 2025-12-29 → 2026-03-26 A (+87d) |  | 0% → 100% |
| RHD4ENMARSUBPT600 | Prepare Material Submittal for Metal Works (Chamber's Covers) - MAR-PT(Completed) | 2025-12-23 A | 2025-12-29 → 2026-08-03 A (+217d) |  | 0% → 100% |
| RHD4ENMARSUBPT100 | Prepare Material Submittal for HDPE pipes - MAR-PT | 2026-01-01 → 2025-12-24 A (-8d) | 2026-01-07 → 2026-02-02 A (+26d) |  | 0% → 100% |
| RHD4ENMARSUBPT200 | Prepare Material Submittal for Valves - MAR-PT | 2026-01-08 → 2025-12-31 A (-8d) | 2026-01-14 → 2026-02-11 A (+28d) |  | 0% → 100% |
| RHD4ENMARSUBPT500 | Prepare Material Submittal for Stem and Surface box - MAR-PT | 2026-01-08 → 2026-11-03 (+299d) | 2026-01-14 → 2026-11-09 (+299d) |  |  |
| 59 | **RHD4-02-002-Submittals of Material and Prequalifications - SUB-Irrigation Network - IRR** |  | 2026-01-17 → 2026-11-09 (+296d) |  |  |
| RHD4ENMARSUBIRR300 | Prepare Material Submittal for Precast Concrete - MAR-IRR | 2025-12-16 A | 2025-12-22 → 2026-03-26 A (+94d) |  | 0% → 100% |
| RHD4ENMARSUBIRR500 | Prepare Material Submittal for Metal Works (Chamber's Covers) - MAR-IRR(Completed) | 2025-12-23 A | 2025-12-30 → 2026-08-03 A (+216d) |  | 0% → 100% |
| RHD4ENMARSUBIRR100 | Prepare Material Submittal for HDPE pipes - MAR-IRR | 2026-01-01 → 2025-12-24 A (-8d) | 2026-01-08 → 2026-02-02 A (+25d) |  | 0% → 100% |
| RHD4ENMARSUBIRR200 | Prepare Material Submittal for Valves - MAR-IRR | 2026-01-10 → 2025-12-31 A (-10d) | 2026-01-17 → 2026-02-11 A (+25d) |  | 0% → 100% |
| RHD4ENMARSUBIRR400 | Prepare Material Submittal for Stem and Surface box - MAR-IRR | 2026-01-10 → 2026-11-03 (+297d) | 2026-01-15 → 2026-11-09 (+298d) |  |  |
| 60 | **RHD4-02-002-Submittals of Material and Prequalifications - SUB-Medium Voltage - MV** |  | 2026-01-06 → 2026-11-16 (+314d) |  |  |
| RHD4ENMARSUBMV100 | Prepare Material Submittal for UPVC Pipes for Duct Banks - MAR-MV | 2025-12-16 A | 2025-12-23 → 2026-01-28 A (+36d) |  | 0% → 100% |
| RHD4ENMARSUBMV600 | Prepare Material Submittal for Unit Substations - MAR-MV | 2025-12-24 → 2026-11-03 (+314d) | 2025-12-30 → 2026-11-09 (+314d) |  |  |
| RHD4ENMARSUBMV700 | Prepare Material Submittal for Ring Main Unit (RMU) - MAR-MV | 2025-12-24 → 2026-11-03 (+314d) | 2025-12-30 → 2026-11-09 (+314d) |  |  |
| RHD4ENMARSUBMV200 | Prepare Material Submittal for Medium Voltage Cable 3Cx500 mm2 - MAR-MV | 2025-12-31 → 2026-11-10 (+314d) | 2026-01-06 → 2026-11-16 (+314d) |  |  |
| RHD4ENMARSUBMV300 | Prepare Material Submittal for Medium Voltage Cable 3Cx50 mm2 - MAR-MV | 2025-12-31 → 2026-11-10 (+314d) | 2026-01-06 → 2026-11-16 (+314d) |  |  |

| ID | Task | Start | Finish | Duration | Complete |
| --- | --- | --- | --- | --- | --- |
| RHD4ENMARSUBMV400 | Prepare Material Submittal for Straight Joints 3Cx50 mm2 - MAR-MV | 2025-12-31 → 2026-11-10 (+314d) | 2026-01-06 → 2026-11-16 (+314d) |  |  |
| RHD4ENMARSUBMV500 | Prepare Material Submittal for Normally Open Points (Outdoor type) - MAR-MV | 2025-12-31 → 2026-11-10 (+314d) | 2026-01-06 → 2026-11-16 (+314d) |  |  |
| 61 | **RHD4-02-002-Submittals of Material and Prequalifications - SUB-Low Voltage - LV** |  | 2026-01-05 → 2026-11-09 (+308d) |  |  |
| RHD4ENMARSUBLV100 | Prepare Material Submittal for UPVC Pipes for Duct Banks - MAR-LV | 2025-12-16 A | 2025-12-23 → 2026-01-28 A (+36d) |  | 0% → 100% |
| RHD4ENMARSUBLV200 | Prepare Material Submittal for Low voltage Cables - MAR-LV | 2025-12-23 A | 2025-12-29 → 2026-04-08 A (+100d) |  | 0% → 100% |
| RHD4ENMARSUBLV300 | Prepare Material Submittal for Distribution Pillars - MAR-LV | 2025-12-30 → 2026-11-03 (+308d) | 2026-01-05 → 2026-11-09 (+308d) |  |  |
| RHD4ENMARSUBLV400 | Prepare Material Submittal for KWH Meter mounting Frame - MAR-LV | 2025-12-30 → 2026-11-03 (+308d) | 2026-01-05 → 2026-11-09 (+308d) |  |  |
| RHD4ENMARSUBLV500 | Prepare Material Submittal for Low Voltage Drawpit - MAR-LV | 2025-12-16 → 2026-11-03 (+322d) | 2025-12-22 → 2026-11-09 (+322d) |  |  |
| RHD4ENMARSUBLV600 | Prepare Material Submittal for Earthing for Pillars and Panels - MAR-LV | 2025-12-30 → 2026-11-03 (+308d) | 2026-01-05 → 2026-11-09 (+308d) |  |  |
| 62 | **RHD4-02-002-Submittals of Material and Prequalifications - SUB-Street Lighting Network -SL** |  | 2026-01-12 → 2026-05-02 (+110d) |  |  |
| RHD4ENMARSUBSL100 | Prepare Material Submittal for UPVC Pipes for Duct Banks - MAR-SL | 2025-12-24 A | 2025-12-29 → 2026-01-28 A (+30d) |  | 0% → 100% |
| RHD4ENMARSUBSL300 | Prepare Material Submittal for Lighting Poles - MAR-SL | 2025-12-30 A | 2026-01-05 → 2026-05-02 A (+117d) |  | 0% → 100% |
| RHD4ENMARSUBSL200 | Prepare Material Submittal for Street Lighting Cables - MAR-SL | 2026-01-06 A | 2026-01-12 → 2026-04-07 A (+85d) |  | 0% → 100% |
| RHD4ENMARSUBSL400 | Prepare Material Submittal for Street Lighting Luminaire - MAR-SL | 2026-01-06 A | 2026-01-12 → 2026-04-08 A (+86d) |  | 0% → 100% |
| RHD4ENMARSUBSL500 | Prepare Material Submittal for Street Lighting Drawpit - MAR-SL | 2025-12-24 → 2026-03-23 A (+89d) | 2025-12-30 → 2026-04-29 A (+120d) | 6d → 5d | 0% → 100% |
| 64 | **RHD4-02-002-Submittals of Material and Prequalifications - SUB-Telecommunications Network - TC** |  | 2026-01-19 → 2026-05-31 (+132d) |  |  |
| RHD4ENMARSUBTC100 | Prepare Material Submittal for HDPE Ducts - MAR-TC | 2026-01-06 A | 2026-01-12 → 2026-03-18 A (+65d) |  | 0% → 100% |
| RHD4ENMARSUBTC200 | Prepare Material Submittal for HDPE Road Crossings Ducts - MAR-TC | 2026-01-06 A | 2026-01-12 → 2026-03-18 A (+65d) |  | 0% → 100% |
| RHD4ENMARSUBTC300 | Prepare Material Submittal for Telecommunications Manhole - MAR-TC | 2026-01-13 A | 2026-01-19 → 2026-05-31 A (+132d) |  | 0% → 100% |
| 65 | **RHD4-02-002-Submittals of Material and Prequalifications - SUB-Information and Communication Technol** |  | 2026-01-19 → 2026-05-25 (+126d) |  |  |
| RHD4ENMARSUBICT300 | Prepare Material Submittal for Telecommunications Manhole - MAR-ICT | 2026-01-04 A | 2026-01-07 → 2026-05-25 A (+138d) |  | 0% → 100% |
| RHD4ENMARSUBICT100 | Prepare Material Submittal for HDPE Ducts - MAR-ICT | 2026-01-13 A | 2026-01-19 → 2026-03-18 A (+58d) |  | 0% → 100% |
| RHD4ENMARSUBICT200 | Prepare Material Submittal for HDPE Road Crossings Ducts - MAR-ICT | 2026-01-13 A | 2026-01-19 → 2026-03-18 A (+58d) |  | 0% → 100% |
| 66 | **RHD4-02-002-Submittals of Material and Prequalifications - SUB-Security Network - CCTV** | 2025-12-13 → 2026-10-01 (+292d) | 2026-01-24 → 2026-11-23 (+303d) |  |  |
| RHD4ENMARSUBCCTV100 | Prepare Material Submittal for CCTV Network Poles - MAR-CCTV | 2026-01-20 → 2026-10-01 A (+254d) | 2026-01-24 → 2026-10-07 A (+256d) | 4d → 6d | 0% → 100% |
| RHD4ENMARSUBCCTV300 | Prepare Material Submittal for CCTV Panels and Panel's Components - MAR-CCTV | 2025-12-13 → 2026-11-03 (+325d) | 2025-12-18 → 2026-11-09 (+326d) |  |  |
| RHD4ENMARSUBCCTV400 | Prepare Material Submittal for CCTV Fiber Optic Cables - MAR-CCTV | 2025-12-20 → 2026-11-10 (+325d) | 2025-12-25 → 2026-11-16 (+326d) |  |  |
| RHD4ENMARSUBCCTV200 | Prepare Material Submittal for CCTV Network Cameras - MAR-CCTV | 2025-12-27 → 2026-11-17 (+325d) | 2026-01-01 → 2026-11-23 (+326d) |  |  |
| RHD4ENMARSUBCCTV500 | Prepare Material Submittal for CCTV Control Room Components - MAR-CCTV | 2025-12-27 → 2026-11-17 (+325d) | 2026-01-01 → 2026-11-23 (+326d) |  |  |
| 67 | **RHD4-02-002-Submittals of Material and Prequalifications - SUB-Road Works - RD** |  | 2026-01-19 → 2026-06-17 (+149d) |  |  |
| RHD4ENMARSUBRD100 | Prepare Material Submittal for Aggregate Base Courses - MAR-RD | 2025-12-16 A | 2025-12-22 → 2026-06-17 A (+177d) |  | 0% → 100% |
| RHD4ENMARSUBRD500 | Prepare Material Submittal for Wheel Stopper - MAR-RD | 2025-12-16 A | 2025-12-22 → 2026-03-18 A (+86d) |  | 0% → 100% |
| RHD4ENMARSUBRD600 | Prepare Material Submittal for Pavement Marking - MAR-RD | 2025-12-16 A | 2025-12-22 → 2026-03-18 A (+86d) |  | 0% → 100% |
| RHD4ENMARSUBRD200 | Prepare Material Submittal for Bituminous Asphalt Layers - MAR-RD | 2025-12-23 A | 2025-12-29 → 2026-06-17 A (+170d) |  | 0% → 100% |
| RHD4ENMARSUBRD300 | Prepare Material Submittal for Precast Concrete Curbstone - MAR-RD | 2025-12-30 → 2025-12-24 A (-6d) | 2026-01-05 → 2026-02-12 A (+38d) |  | 0% → 100% |
| RHD4ENMARSUBRD700 | Prepare Material Submittal for Traffic Signage - MAR-RD | 2026-01-06 → 2026-01-01 A (-5d) | 2026-01-12 → 2026-03-19 A (+66d) |  | 0% → 100% |
| RHD4ENMARSUBRD400 | Prepare Material Submittal for Interlock Precast Concrete Unit Paving - MAR-RD | 2026-01-13 → 2026-01-08 A (-5d) | 2026-01-19 → 2026-02-12 A (+24d) |  | 0% → 100% |
| 68 | **RHD4-02-002-Submittals of Material and Prequalifications - SUB-Lift Stations - LFS** |  | 2026-01-20 → 2026-11-16 (+300d) |  |  |
| RHD4ENMARSUBLFS2800 | Prepare Material Submittal for Programmable Logic Controllers and Instrumentation for Process Systems - MAR-LFS(Complete | 2025-12-13 A | 2025-12-20 → 2026-08-03 A (+226d) |  | 0% → 100% |
| RHD4ENMARSUBLFS2900 | Prepare Material Submittal for Fire Alarm System - MAR-LFS | 2025-12-13 A | 2025-12-18 → 2026-05-03 A (+136d) |  | 0% → 100% |
| RHD4ENMARSUBLFS800 | Prepare Material Submittal for Ductile Iron Pipes & Fittings - MAR-LFS(Completed) | 2025-12-15 A | 2025-12-22 → 2026-08-03 A (+224d) |  | 0% → 100% |
| RHD4ENMARSUBLFS1800 | Prepare Material Submittal for UPVC Pipes for Sanitary Drain - MAR-LFS | 2025-12-16 A | 2025-12-21 → 2026-03-05 A (+74d) |  | 0% → 100% |
| RHD4ENMARSUBLFS900 | Prepare Material Submittal for Sewage Lift Station Valves - MAR-LFS | 2025-12-15 → 2025-12-17 A (+2d) | 2025-12-22 → 2026-02-11 A (+51d) |  | 0% → 100% |
| RHD4ENMARSUBLFS200 | Prepare Material Submittal for Roof Waterproofing System - MAR-LFS | 2025-12-22 A | 2025-12-27 → 2026-05-03 A (+127d) |  | 0% → 100% |
| RHD4ENMARSUBLFS1300 | Prepare Material Submittal for Surge Tank - MAR-LFS | 2025-12-28 A | 2026-01-04 → 2026-03-24 A (+79d) |  | 0% → 100% |
| RHD4ENMARSUBLFS2000 | Prepare Material Submittal for Motor Control Center (MCC) - MAR-LFS | 2025-12-28 A | 2025-12-31 → 2026-03-26 A (+85d) |  | 0% → 100% |
| RHD4ENMARSUBLFS300 | Prepare Material Submittal for Bituminous Sheet Waterproofing - MAR-LFS | 2025-12-28 A | 2026-01-04 → 2026-05-03 A (+119d) |  | 0% → 100% |
| RHD4ENMARSUBLFS1200 | Prepare Material Submittal for Submersible pumps - MAR-LFS | 2026-01-13 → 2025-12-31 A (-13d) | 2026-01-20 → 2026-03-15 A (+54d) |  | 0% → 100% |
| RHD4ENMARSUBLFS2300 | Prepare Material Submittal for Standby Diesel Generator - MAR-LFS | 2026-01-01 A | 2026-01-08 → 2026-04-13 A (+95d) |  | 0% → 100% |
| RHD4ENMARSUBLFS2400 | Prepare Material Submittal for Low Voltage Cables - MAR-LFS | 2026-01-01 A | 2026-01-07 → 2026-03-26 A (+78d) |  | 0% → 100% |
| RHD4ENMARSUBLFS3000 | Prepare Material Submittal for Fence and Gates for Lift Stations - MAR-LFS | 2026-01-01 A | 2026-01-07 → 2026-04-28 A (+111d) |  | 0% → 100% |
| RHD4ENMARSUBLFS1400 | Prepare Material Submittal for Basket screen - MAR-LFS | 2026-01-05 A | 2026-01-12 → 2026-03-12 A (+59d) |  | 0% → 100% |
| RHD4ENMARSUBLFS1500 | Prepare Material Submittal for Isolation Penstock - MAR-LFS | 2026-01-05 A | 2026-01-11 → 2026-04-09 A (+88d) |  | 0% → 100% |
| RHD4ENMARSUBLFS1600 | Prepare Material Submittal for Odours scrubbing system - MAR-LFS | 2026-01-05 A | 2026-01-12 → 2026-03-01 A (+48d) |  | 0% → 100% |
| RHD4ENMARSUBLFS1700 | Prepare Material Submittal for JIB Crane - MAR-LFS | 2026-01-05 A | 2026-01-12 → 2026-03-16 A (+63d) |  | 0% → 100% |
| RHD4ENMARSUBLFS400 | Prepare Material Submittal for Fluid-Applied Waterproofing - MAR-LFS | 2026-01-05 A | 2026-01-11 → 2026-04-25 A (+104d) |  | 0% → 100% |
| RHD4ENMARSUBLFS2100 | Prepare Material Submittal for lighting and power panel boards - MAR-LFS | 2026-01-08 A | 2026-01-12 → 2026-03-26 A (+73d) |  | 0% → 100% |
| RHD4ENMARSUBLFS700 | Prepare Material Submittal for Epoxy Coating - MAR-LFS | 2026-01-08 A | 2026-01-14 → 2026-04-20 A (+96d) |  | 0% → 100% |
| RHD4ENMARSUBLFS1100 | Prepare Material Submittal for Magnetic type flowmeter - MAR-LFS(Completed) | 2026-01-13 A | 2026-01-20 → 2026-08-03 A (+195d) |  | 0% → 100% |
| RHD4ENMARSUBLFS2500 | Prepare Material Submittal for Lighting Fixtures - MAR-LFS | 2026-01-13 A | 2026-01-19 → 2026-04-08 A (+79d) |  | 0% → 100% |
| RHD4ENMARSUBLFS1000 | Prepare Material Submittal for Screening Container - MAR-LFS | 2025-12-23 → 2026-08-13 A (+233d) | 2025-12-30 → 2026-09-18 A (+262d) |  | 0% → 100% |
| RHD4ENMARSUBLFS2600 | Prepare Material Submittal for Wiring Devices - MAR-LFS | 2025-12-13 → 2026-08-15 A (+245d) | 2025-12-18 → 2026-08-20 A (+245d) |  | 0% → 100% |
| RHD4ENMARSUBLFS100 | Prepare Material Submittal for Metal Ladder and checkered Plate - MAR-LFS | 2026-01-12 → 2026-11-03 (+295d) | 2026-01-18 → 2026-11-09 (+295d) |  |  |
| RHD4ENMARSUBLFS1900 | Prepare Material Submittal for wall mounted Split/AC - MAR-LFS | 2026-01-05 → 2026-11-03 (+302d) | 2026-01-11 → 2026-11-09 (+302d) |  |  |
| RHD4ENMARSUBLFS2700 | Prepare Material Submittal for Enclosed Switches and Circuit Breakers - MAR-LFS | 2025-12-13 → 2026-11-03 (+325d) | 2025-12-18 → 2026-11-09 (+326d) |  |  |
| RHD4ENMARSUBLFS500 | Prepare Material Submittal for Metal Doors and Access Doors and Frames - MAR-LFS | 2025-12-13 → 2026-11-03 (+325d) | 2025-12-18 → 2026-11-09 (+326d) |  |  |
| RHD4ENMARSUBLFS2200 | Prepare Material Submittal for Earthing for Lift Stations - MAR-LFS | 2025-12-20 → 2026-11-10 (+325d) | 2025-12-25 → 2026-11-16 (+326d) |  |  |
| RHD4ENMARSUBLFS600 | Prepare Material Submittal for Painting - MAR-LFS | 2025-12-20 → 2026-11-10 (+325d) | 2025-12-27 → 2026-11-16 (+324d) | 7d → 6d |  |
| 2 | **RHD4-02-002-Submittals of Material and Prequalifications - SUB-Tunnels - TUN** |  | 2026-01-21 → 2026-05-17 (+116d) |  |  |
| RHD4ENMARSUBTU100 | Prepare Material Submittal for Concrete - MAR-TUN | 2026-01-15 A | 2026-01-21 → 2026-05-17 A (+116d) |  | 0% → 100% |

| ID | Task | Start | Finish | Duration | Complete |
| --- | --- | --- | --- | --- | --- |
| 69 | **RHD4-02-002-Approval of Material and Prequalifications - APP** |  | 2026-01-28 → 2026-11-30 (+306d) |  |  |
| 1 | **RHD4-02-002-Approval of Material and Prequalifications - APP-Earth works Material - EW** | 2026-01-20 → 2025-12-17 (-34d) | 2026-01-27 → 2026-02-21 (+25d) |  |  |
| RHD4ENMARAPPEW100 | Approval of Material Submittal for Earth work Materials - MAR-EW | 2026-01-20 → 2025-12-17 A (-34d) | 2026-01-27 → 2026-02-21 A (+25d) |  | 0% → 100% |
| 70 | **RHD4-02-002-Approval of Material and Prequalifications - APP-Storm Network - ST** | 2025-12-23 → 2025-12-17 (-6d) | 2026-01-24 → 2026-11-09 (+289d) |  |  |
| RHD4ENMARAPPST100 | Approval of Material Submittal for GRP pipes - MAR-ST | 2025-12-23 → 2025-12-17 A (-6d) | 2025-12-30 → 2026-02-05 A (+37d) |  | 0% → 100% |
| RHD4ENMARAPPST200 | Approval of Material Submittal for UPVC pipes - MAR-ST | 2025-12-24 → 2025-12-17 A (-7d) | 2025-12-31 → 2026-01-31 A (+31d) |  | 0% → 100% |
| RHD4ENMARAPPST400 | Approval of Material Submittal for Catch basin - MAR-ST | 2026-01-01 → 2025-12-24 A (-8d) | 2026-01-08 → 2026-03-28 A (+79d) |  | 0% → 100% |
| RHD4ENMARAPPST300 | Approval of Material Submittal for HDPE pipes - MAR-ST | 2026-01-10 → 2025-12-31 A (-10d) | 2026-01-17 → 2026-02-09 A (+23d) |  | 0% → 100% |
| RHD4ENMARAPPST700 | Approval of Material Submittal for Precast Concrete - MAR-ST | 2026-01-12 → 2026-01-14 A (+2d) | 2026-01-19 → 2026-03-29 A (+69d) |  | 0% → 100% |
| RHD4ENMARAPPST600 | Approval of Material Submittal for Tensile reinforcement steel - MAR-ST | 2026-01-17 A | 2026-01-24 → 2026-04-27 A (+93d) |  | 0% → 100% |
| RHD4ENMARAPPST800 | Approval of Material Submittal for Metal Works (Stairs - Manhole Covers) - MAR-ST | 2026-01-17 → 2026-08-18 A (+213d) | 2026-01-24 → 2026-11-04 (+284d) |  | 0% → 50% |
| RHD4ENMARAPPST500 | Approval of Material Submittal for Grouted Riprap - MAR-ST | 2026-01-13 → 2026-11-03 (+294d) | 2026-01-20 → 2026-11-09 (+293d) | 7d → 6d |  |
| 72 | **RHD4-02-002-Approval of Material and Prequalifications - APP-Potable Water Network - PT** |  | 2026-01-22 → 2026-11-16 (+298d) |  |  |
| RHD4ENMARAPPPT300 | Approval of Material Submittal for Fire Hydrants - MAR-PT | 2025-12-23 A | 2025-12-24 → 2026-01-19 A (+26d) |  | 0% → 100% |
| RHD4ENMARAPPPT400 | Approval of Material Submittal for Precast Concrete - MAR-PT | 2025-12-30 A | 2026-01-05 → 2026-03-28 A (+82d) |  | 0% → 100% |
| RHD4ENMARAPPPT100 | Approval of Material Submittal for HDPE pipes - MAR-PT | 2026-01-08 → 2025-12-31 A (-8d) | 2026-01-15 → 2026-02-05 A (+21d) |  | 0% → 100% |
| RHD4ENMARAPPPT200 | Approval of Material Submittal for Valves - MAR-PT | 2026-01-15 → 2026-01-07 A (-8d) | 2026-01-22 → 2026-02-18 A (+27d) |  | 0% → 100% |
| RHD4ENMARAPPPT600 | Approval of Material Submittal for Metal Works (Chamber's Covers) - MAR-PT | 2025-12-30 → 2026-11-03 (+308d) | 2026-01-05 → 2026-11-09 (+308d) |  |  |
| RHD4ENMARAPPPT500 | Approval of Material Submittal for Stem and Surface box - MAR-PT | 2026-01-15 → 2026-11-10 (+299d) | 2026-01-21 → 2026-11-16 (+299d) |  |  |
| 73 | **RHD4-02-002-Approval of Material and Prequalifications - APP-Irrigation Network - IRR** |  | 2026-01-25 → 2026-11-16 (+295d) |  |  |
| RHD4ENMARAPPIRR300 | Approval of Material Submittal for Precast Concrete - MAR-IRR | 2025-12-23 A | 2025-12-29 → 2026-03-28 A (+89d) |  | 0% → 100% |
| RHD4ENMARAPPIRR100 | Approval of Material Submittal for HDPE pipes - MAR-IRR | 2026-01-10 → 2025-12-31 A (-10d) | 2026-01-17 → 2026-02-05 A (+19d) |  | 0% → 100% |
| RHD4ENMARAPPIRR200 | Approval of Material Submittal for Valves - MAR-IRR | 2026-01-18 → 2026-01-07 A (-11d) | 2026-01-25 → 2026-02-18 A (+24d) |  | 0% → 100% |
| RHD4ENMARAPPIRR500 | Approval of Material Submittal for Metal Works (Chamber's Covers) - MAR-IRR | 2025-12-31 → 2026-11-03 (+307d) | 2026-01-06 → 2026-11-09 (+307d) |  |  |
| RHD4ENMARAPPIRR400 | Approval of Material Submittal for Stem and Surface box - MAR-IRR | 2026-01-17 → 2026-11-10 (+297d) | 2026-01-22 → 2026-11-16 (+298d) |  |  |
| 74 | **RHD4-02-002-Approval of Material and Prequalifications - APP-Medium Voltage - MV** |  | 2026-01-13 → 2026-11-23 (+314d) |  |  |
| RHD4ENMARAPPMV100 | Approval of Material Submittal for UPVC Pipes for Duct Banks - MAR-MV | 2025-12-24 A | 2025-12-30 → 2026-02-04 A (+36d) |  | 0% → 100% |
| RHD4ENMARAPPMV600 | Approval of Material Submittal for Unit Substations - MAR-MV | 2025-12-31 → 2026-11-10 (+314d) | 2026-01-06 → 2026-11-16 (+314d) |  |  |
| RHD4ENMARAPPMV700 | Approval of Material Submittal for Ring Main Unit (RMU) - MAR-MV | 2025-12-31 → 2026-11-10 (+314d) | 2026-01-06 → 2026-11-16 (+314d) |  |  |
| RHD4ENMARAPPMV200 | Approval of Material Submittal for Medium Voltage Cable 3Cx500 mm2 - MAR-MV | 2026-01-07 → 2026-11-17 (+314d) | 2026-01-13 → 2026-11-23 (+314d) |  |  |
| RHD4ENMARAPPMV300 | Approval of Material Submittal for Medium Voltage Cable 3Cx50 mm2 - MAR-MV | 2026-01-07 → 2026-11-17 (+314d) | 2026-01-13 → 2026-11-23 (+314d) |  |  |
| RHD4ENMARAPPMV400 | Approval of Material Submittal for Straight Joints 3Cx50 mm2 - MAR-MV | 2026-01-07 → 2026-11-17 (+314d) | 2026-01-13 → 2026-11-23 (+314d) |  |  |
| RHD4ENMARAPPMV500 | Approval of Material Submittal for Normally Open Points (Outdoor type) - MAR-MV | 2026-01-07 → 2026-11-17 (+314d) | 2026-01-13 → 2026-11-23 (+314d) |  |  |
| 75 | **RHD4-02-002-Approval of Material and Prequalifications - APP-Low Voltage - LV** | 2025-12-23 → 2025-12-24 (+1d) | 2026-01-12 → 2026-11-16 (+308d) |  |  |
| RHD4ENMARAPPLV100 | Approval of Material Submittal for UPVC Pipes for Duct Banks - MAR-LV | 2025-12-24 A | 2025-12-31 → 2026-01-31 A (+31d) |  | 0% → 100% |
| RHD4ENMARAPPLV200 | Approval of Material Submittal for Low voltage Cables - MAR-LV | 2025-12-30 A | 2026-01-05 → 2026-04-15 A (+100d) |  | 0% → 100% |
| RHD4ENMARAPPLV300 | Approval of Material Submittal for Distribution Pillars - MAR-LV | 2026-01-06 → 2026-11-10 (+308d) | 2026-01-12 → 2026-11-16 (+308d) |  |  |
| RHD4ENMARAPPLV400 | Approval of Material Submittal for KWH Meter mounting Frame - MAR-LV | 2026-01-06 → 2026-11-10 (+308d) | 2026-01-12 → 2026-11-16 (+308d) |  |  |
| RHD4ENMARAPPLV500 | Approval of Material Submittal for Low Voltage Drawpit - MAR-LV | 2025-12-23 → 2026-11-10 (+322d) | 2025-12-29 → 2026-11-16 (+322d) |  |  |
| RHD4ENMARAPPLV600 | Approval of Material Submittal for Earthing for Pillars and Panels - MAR-LV | 2026-01-06 → 2026-11-10 (+308d) | 2026-01-12 → 2026-11-16 (+308d) |  |  |
| 76 | **RHD4-02-002-Approval of Material and Prequalifications - APP-Street Lighting Network -SL** |  | 2026-01-19 → 2026-05-05 (+106d) |  |  |
| RHD4ENMARAPPSL100 | Approval of Material Submittal for UPVC Pipes for Duct Banks - MAR-SL | 2025-12-30 A | 2026-01-05 → 2026-02-04 A (+30d) |  | 0% → 100% |
| RHD4ENMARAPPSL300 | Approval of Material Submittal for Lighting Poles - MAR-SL | 2026-01-06 A | 2026-01-08 → 2026-05-05 A (+117d) |  | 0% → 100% |
| RHD4ENMARAPPSL200 | Approval of Material Submittal for Street Lighting Cables - MAR-SL | 2026-01-13 A | 2026-01-19 → 2026-04-15 A (+86d) |  | 0% → 100% |
| RHD4ENMARAPPSL400 | Approval of Material Submittal for Street Lighting Luminaire - MAR-SL | 2026-01-13 A | 2026-01-19 → 2026-04-15 A (+86d) |  | 0% → 100% |
| RHD4ENMARAPPSL500 | Approval of Material Submittal for Street Lighting Drawpit - MAR-SL | 2025-12-31 → 2026-04-29 A (+119d) | 2026-01-06 → 2026-04-30 A (+114d) | 6d → 2d | 0% → 100% |
| 78 | **RHD4-02-002-Approval of Material and Prequalifications - APP-Telecommunications Network - TC** |  | 2026-01-26 → 2026-06-04 (+129d) |  |  |
| RHD4ENMARAPPTC100 | Approval of Material Submittal for HDPE Ducts - MAR-TC | 2026-01-13 A | 2026-01-17 → 2026-03-26 A (+68d) |  | 0% → 100% |
| RHD4ENMARAPPTC200 | Approval of Material Submittal for HDPE Road Crossings Ducts - MAR-TC | 2026-01-13 A | 2026-01-17 → 2026-03-26 A (+68d) |  | 0% → 100% |
| RHD4ENMARAPPTC300 | Approval of Material Submittal for Telecommunications Manhole - MAR-TC | 2026-01-20 A | 2026-01-26 → 2026-06-04 A (+129d) |  | 0% → 100% |
| 79 | **RHD4-02-002-Approval of Material and Prequalifications - APP-Information and Communication Technolog** |  | 2026-01-24 → 2026-06-04 (+131d) |  |  |
| RHD4ENMARAPPICT300 | Approval of Material Submittal for Telecommunications Manhole - MAR-ICT | 2026-01-08 A | 2026-01-14 → 2026-06-04 A (+141d) |  | 0% → 100% |
| RHD4ENMARAPPICT100 | Approval of Material Submittal for HDPE Ducts - MAR-ICT | 2026-01-20 A | 2026-01-24 → 2026-03-26 A (+61d) |  | 0% → 100% |
| RHD4ENMARAPPICT200 | Approval of Material Submittal for HDPE Road Crossings Ducts - MAR-ICT | 2026-01-20 A | 2026-01-24 → 2026-03-26 A (+61d) |  | 0% → 100% |
| 80 | **RHD4-02-002-Approval of Material and Prequalifications - APP-Security Network - CCTV** | 2025-12-20 → 2026-11-03 (+318d) | 2026-01-28 → 2026-11-30 (+306d) |  |  |
| RHD4ENMARAPPCCTV100 | Approval of Material Submittal for CCTV Network Poles - MAR-CCTV | 2026-01-25 → 2026-11-03 (+282d) | 2026-01-28 → 2026-11-09 (+285d) | 4d → 6d |  |
| RHD4ENMARAPPCCTV300 | Approval of Material Submittal for CCTV Panels and Panel's Components - MAR-CCTV | 2025-12-20 → 2026-11-10 (+325d) | 2025-12-25 → 2026-11-16 (+326d) |  |  |
| RHD4ENMARAPPCCTV400 | Approval of Material Submittal for CCTV Fiber Optic Cables - MAR-CCTV | 2025-12-27 → 2026-11-17 (+325d) | 2026-01-01 → 2026-11-23 (+326d) |  |  |
| RHD4ENMARAPPCCTV200 | Approval of Material Submittal for CCTV Network Cameras - MAR-CCTV | 2026-01-03 → 2026-11-24 (+325d) | 2026-01-08 → 2026-11-30 (+326d) |  |  |
| RHD4ENMARAPPCCTV500 | Approval of Material Submittal for CCTV Control Room Components - MAR-CCTV | 2026-01-03 → 2026-11-24 (+325d) | 2026-01-08 → 2026-11-30 (+326d) |  |  |
| 81 | **RHD4-02-002-Approval of Material and Prequalifications - APP-Road Works - RD** |  | 2026-01-27 → 2026-11-09 (+286d) |  |  |
| RHD4ENMARAPPRD100 | Approval of Material Submittal for Aggregate Base Courses - MAR-RD | 2025-12-23 A | 2025-12-29 → 2026-05-24 A (+146d) |  | 0% → 100% |
| RHD4ENMARAPPRD600 | Approval of Material Submittal for Pavement Marking - MAR-RD | 2025-12-23 A | 2025-12-29 → 2026-03-28 A (+89d) |  | 0% → 100% |
| RHD4ENMARAPPRD200 | Approval of Material Submittal for Bituminous Asphalt Layers - MAR-RD | 2025-12-30 A | 2026-01-05 → 2026-05-24 A (+139d) |  | 0% → 100% |
| RHD4ENMARAPPRD300 | Approval of Material Submittal for Precast Concrete Curbstone - MAR-RD | 2026-01-06 → 2026-01-01 A (-5d) | 2026-01-12 → 2026-02-19 A (+38d) |  | 0% → 100% |
| RHD4ENMARAPPRD700 | Approval of Material Submittal for Traffic Signage - MAR-RD | 2026-01-13 → 2026-01-08 A (-5d) | 2026-01-19 → 2026-03-28 A (+68d) |  | 0% → 100% |
| RHD4ENMARAPPRD400 | Approval of Material Submittal for Interlock Precast Concrete Unit Paving - MAR-RD | 2026-01-20 → 2026-01-15 A (-5d) | 2026-01-27 → 2026-02-16 A (+20d) |  | 0% → 100% |
| RHD4ENMARAPPRD500 | Approval of Material Submittal for Wheel Stopper - MAR-RD | 2025-12-23 → 2026-11-03 (+315d) | 2025-12-29 → 2026-11-09 (+315d) |  |  |
| 82 | **RHD4-02-002-Approval of Material and Prequalifications - APP-Lift Stations - LFS** |  | 2026-01-27 → 2026-11-23 (+300d) |  |  |
| RHD4ENMARAPPLFS2800 | Approval of Material Submittal for Programmable Logic Controllers and Instrumentation for Process Systems - MAR-LFS(Comp | 2025-12-13 A | 2025-12-18 → 2026-08-03 A (+228d) |  | 0% → 100% |

| ID | Task | Start | Finish | Duration | Complete | Other |
| --- | --- | --- | --- | --- | --- | --- |
| RHD4ENMARAPPLFS2900 | Approval of Material Submittal for Fire Alarm System - MAR-LFS | 2025-12-20 A | 2025-12-22 → 2026-05-06 A (+135d) |  | 0% → 100% |  |
| RHD4ENMARAPPLFS1800 | Approval of Material Submittal for UPVC Pipes for Sanitary Drain - MAR-LFS | 2025-12-22 A | 2025-12-29 → 2026-03-08 A (+69d) |  | 0% → 100% |  |
| RHD4ENMARAPPLFS900 | Approval of Material Submittal for Sewage Lift Station Valves - MAR-LFS | 2025-12-23 → 2025-12-24 A (+1d) | 2025-12-29 → 2026-02-17 A (+50d) |  | 0% → 100% |  |
| RHD4ENMARAPPLFS200 | Approval of Material Submittal for Roof Waterproofing System - MAR-LFS | 2025-12-28 A | 2025-12-30 → 2026-05-06 A (+127d) |  | 0% → 100% |  |
| RHD4ENMARAPPLFS2000 | Approval of Material Submittal for Motor Control Center (MCC) - MAR-LFS | 2026-01-01 A | 2026-01-03 → 2026-03-29 A (+85d) |  | 0% → 100% |  |
| RHD4ENMARAPPLFS1600 | Approval of Material Submittal for Odours scrubbing system - MAR-LFS | 2026-01-13 → 2026-01-03 A (-10d) | 2026-01-19 → 2026-01-08 A (-11d) |  | 0% → 100% |  |
| RHD4ENMARAPPLFS1300 | Approval of Material Submittal for Surge Tank - MAR-LFS | 2026-01-05 A | 2026-01-11 → 2026-04-01 A (+80d) |  | 0% → 100% |  |
| RHD4ENMARAPPLFS300 | Approval of Material Submittal for Bituminous Sheet Waterproofing - MAR-LFS | 2026-01-05 A | 2026-01-07 → 2026-05-06 A (+119d) |  | 0% → 100% |  |
| RHD4ENMARAPPLFS1200 | Approval of Material Submittal for Submersible pumps - MAR-LFS | 2026-01-21 → 2026-01-07 A (-14d) | 2026-01-27 → 2026-03-18 A (+50d) |  | 0% → 100% |  |
| RHD4ENMARAPPLFS2400 | Approval of Material Submittal for Low Voltage Cables - MAR-LFS | 2026-01-08 A | 2026-01-11 → 2026-03-30 A (+78d) |  | 0% → 100% |  |
| RHD4ENMARAPPLFS3000 | Approval of Material Submittal for Fences and Gates - MAR-LFS | 2026-01-08 A | 2026-01-10 → 2026-04-30 A (+110d) |  | 0% → 100% |  |
| RHD4ENMARAPPLFS2300 | Approval of Material Submittal for Standby Diesel Generator - MAR-LFS | 2026-01-10 A | 2026-01-15 → 2026-04-20 A (+95d) |  | 0% → 100% |  |
| RHD4ENMARAPPLFS1500 | Approval of Material Submittal for Isolation Penstock - MAR-LFS | 2026-01-12 A | 2026-01-18 → 2026-04-16 A (+88d) |  | 0% → 100% |  |
| RHD4ENMARAPPLFS1400 | Approval of Material Submittal for Basket screen - MAR-LFS | 2026-01-13 A | 2026-01-20 → 2026-03-15 A (+54d) |  | 0% → 100% |  |
| RHD4ENMARAPPLFS1700 | Approval of Material Submittal for JIB Crane - MAR-LFS | 2026-01-13 A | 2026-01-20 → 2026-03-18 A (+57d) |  | 0% → 100% |  |
| RHD4ENMARAPPLFS2100 | Approval of Material Submittal for lighting and power panel boards - MAR-LFS | 2026-01-13 A | 2026-01-14 → 2026-03-29 A (+74d) |  | 0% → 100% |  |
| RHD4ENMARAPPLFS700 | Approval of Material Submittal for Epoxy Coating - MAR-LFS | 2026-01-15 A | 2026-01-17 → 2026-04-22 A (+95d) |  | 0% → 100% |  |
| RHD4ENMARAPPLFS400 | Approval of Material Submittal for Fluid-Applied Waterproofing - MAR-LFS | 2026-01-17 A | 2026-01-19 → 2026-04-28 A (+99d) |  | 0% → 100% |  |
| RHD4ENMARAPPLFS2500 | Approval of Material Submittal for Lighting Fixtures - MAR-LFS | 2026-01-20 A | 2026-01-26 → 2026-04-14 A (+78d) |  | 0% → 100% |  |
| RHD4ENMARAPPLFS800 | Approval of Material Submittal for Ductile Iron Pipes & Fittings - MAR-LFS | 2025-12-23 → 2026-08-04 A (+224d) | 2025-12-29 → 2026-08-10 A (+224d) |  | 0% → 100% |  |
| RHD4ENMARAPPLFS1100 | Approval of Material Submittal for Magnetic type flowmeter - MAR-LFS | 2026-01-21 → 2026-09-19 A (+241d) | 2026-01-27 → 2026-09-26 A (+242d) |  | 0% → 100% |  |
| RHD4ENMARAPPLFS1000 | Approval of Material Submittal for Screening Container - MAR-LFS | 2026-01-12 → 2026-10-01 A (+262d) | 2026-01-18 → 2026-10-07 A (+262d) |  | 0% → 100% |  |
| RHD4ENMARAPPLFS2600 | Approval of Material Submittal for Wiring Devices - MAR-LFS | 2025-12-20 → 2026-11-03 (+318d) | 2025-12-25 → 2026-11-09 (+319d) |  |  |  |
| RHD4ENMARAPPLFS2800_R | Approval of Material Submittal for Programmable Logic Controllers and Instrumentation for Process Systems - MAR-LFS(Rema | 2026-01-20 → 2026-11-03 (+287d) | 2026-01-26 → 2026-11-09 (+287d) |  |  |  |
| RHD4ENMARAPPLFS100 | Approval of Material Submittal for Metal Ladder and checkered Plate - MAR-LFS | 2026-01-19 → 2026-11-10 (+295d) | 2026-01-25 → 2026-11-16 (+295d) |  |  |  |
| RHD4ENMARAPPLFS1900 | Approval of Material Submittal for wall mounted Split/AC - MAR-LFS | 2026-01-12 → 2026-11-10 (+302d) | 2026-01-18 → 2026-11-16 (+302d) |  |  |  |
| RHD4ENMARAPPLFS2700 | Approval of Material Submittal for Enclosed Switches and Circuit Breakers - MAR-LFS | 2025-12-20 → 2026-11-10 (+325d) | 2025-12-25 → 2026-11-16 (+326d) |  |  |  |
| RHD4ENMARAPPLFS500 | Approval of Material Submittal for Metal Doors and Access Doors and Frames - MAR-LFS | 2025-12-20 → 2026-11-10 (+325d) | 2025-12-25 → 2026-11-16 (+326d) |  |  |  |
| RHD4ENMARAPPLFS2200 | Approval of Material Submittal for Earthing for Lift Stations - MAR-LFS | 2025-12-27 → 2026-11-17 (+325d) | 2026-01-01 → 2026-11-23 (+326d) |  |  |  |
| RHD4ENMARAPPLFS600 | Approval of Material Submittal for Painting - MAR-LFS | 2025-12-28 → 2026-11-17 (+324d) | 2026-01-03 → 2026-11-23 (+324d) |  |  |  |
| 71 | **RHD4-02-002-Approval of Material and Prequalifications - APP-Sewage Network - SW** | 2025-12-30 → 2025-12-24 (-6d) | 2026-01-27 → 2026-03-29 (+61d) |  |  |  |
| RHD4ENMARAPPSW200 | Approval of Material Submittal for GRP pipes - MAR-SW | 2025-12-30 → 2025-12-24 A (-6d) | 2026-01-06 → 2026-02-04 A (+29d) |  | 0% → 100% |  |
| RHD4ENMARAPPSW100 | Approval of Material Submittal for UPVC pipes - MAR-SW | 2026-01-07 → 2025-12-31 A (-7d) | 2026-01-14 → 2026-01-31 A (+17d) |  | 0% → 100% |  |
| RHD4ENMARAPPSW300 | Approval of Material Submittal for Valves - MAR-SW | 2026-01-06 → 2025-12-31 A (-6d) | 2026-01-13 → 2026-01-19 A (+6d) |  | 0% → 100% |  |
| RHD4ENMARAPPSW400 | Approval of Material Submittal for Precast Concrete - MAR-SW | 2026-01-13 → 2026-01-07 A (-6d) | 2026-01-19 → 2026-03-29 A (+69d) |  | 0% → 100% |  |
| RHD4ENMARAPPSW600 | Approval of Material Submittal for HDPE pipes - MAR-SW | 2026-01-20 → 2026-01-14 A (-6d) | 2026-01-27 → 2026-02-05 A (+9d) |  | 0% → 100% |  |
| RHD4ENMARAPPSW500 | Approval of Material Submittal for Metal Works (Stairs - Manhole Covers) - MAR-SW | 2026-01-21 A | 2026-01-22 → 2026-02-11 A (+20d) |  | 0% → 100% |  |
| 2 | **RHD4-02-002-Approval of Material and Prequalifications - APP-Tunnels - TUN** |  | 2026-01-28 → 2026-05-24 (+116d) |  |  |  |
| RHD4ENMARAPPTU100 | Approval of Material Submittal for Concrete - MAR-TU | 2026-01-22 A | 2026-01-28 → 2026-05-24 A (+116d) |  | 0% → 100% |  |
| 97 | **RHD4-02-002-Procurement - PR** | 2025-12-23 → 2025-12-31 (+8d) | 2026-09-03 → 2027-04-21 (+230d) |  |  |  |
| 127 | **RHD4-02-002-Long Lead Items -LOL** | 2026-01-07 → 2026-01-20 (+13d) | 2026-07-02 → 2027-04-21 (+293d) |  |  |  |
| 128 | **RHD4-02-002-Long Lead Items - LOL-Material Purchase Order - PO** | 2026-01-07 → 2026-01-20 (+13d) | 2026-02-12 → 2026-12-16 (+307d) |  |  |  |
| 104 | **RHD4-02-002-LOL-Material Purchase Order - PO-Medium Voltage - MV** | 2026-01-07 → 2026-11-17 (+314d) | 2026-01-22 → 2026-12-02 (+314d) |  |  |  |
| RHD4PRLOLPOMV1500 | Material Purchase Order for Unit Substations - LOL-MV | 2026-01-07 → 2026-11-17 (+314d) | 2026-01-22 → 2026-12-02 (+314d) |  |  | resources Procurement Engineer [165.56 h] → Procurement Engineer [165.6 h] |
| RHD4PRLOLPOMV1600 | Material Purchase Order for Ring Main Unit (RMU) - LOL-MV | 2026-01-07 → 2026-11-17 (+314d) | 2026-01-22 → 2026-12-02 (+314d) |  |  | resources Procurement Engineer [165.56 h] → Procurement Engineer [165.6 h] |
| 129 | **RHD4-02-002-LOL-Material Purchase Order - PO-Security Network - CCTV** | 2026-01-10 → 2026-12-01 (+325d) | 2026-01-25 → 2026-12-16 (+325d) |  |  |  |
| RHD4PRLOLPOCCTV1000 | Material Purchase Order for CCTV Control Room Components - LOL-CCTV | 2026-01-10 → 2026-12-01 (+325d) | 2026-01-25 → 2026-12-16 (+325d) |  |  |  |
| 130 | **RHD4-02-002-LOL-Material Purchase Order - PO-Lift Stations - LFS** | 2026-01-12 → 2026-01-20 (+8d) | 2026-02-12 → 2026-11-25 (+286d) |  |  |  |
| RHD4PRLOLPOLFS1400 | Material Purchase Order for Odours scrubbing system - LOL-LFS | 2026-01-20 A | 2026-01-24 → 2026-08-08 A (+196d) |  | 0% → 100% | resources Procurement Engineer [165.56 h] → Procurement Engineer [165.6 h] |
| RHD4PRLOLPOLFS1200 | Material Purchase Order for Submersible pumps - LOL-PO | 2026-01-28 A | 2026-02-04 → 2026-08-11 A (+188d) |  | 0% → 100% | resources Procurement Engineer [165.56 h] → Procurement Engineer [165.6 h] |
| RHD4PRLOLPOLFS1300 | Material Purchase Order for Surge Tank - LOL-LFS | 2026-01-12 → 2026-08-11 A (+211d) | 2026-01-27 → 2026-09-30 A (+246d) |  | 0% → 100% | resources Procurement Engineer [165.56 h] → Procurement Engineer [165.6 h] |
| RHD4PRLOLPOLFS1500 | Material Purchase Order for JIB Crane - LOL-LFS | 2026-01-21 → 2026-09-22 A (+244d) | 2026-02-05 → 2026-10-08 A (+245d) |  | 0% → 100% | resources Procurement Engineer [165.56 h] → Procurement Engineer [165.6 h] |
| RHD4PRLOLPOLFS2000 | Material Purchase Order for Isolation Penstock - LOL-LFS | 2026-01-19 → 2026-09-22 A (+246d) | 2026-02-03 → 2026-10-08 A (+247d) |  | 0% → 100% | resources Procurement Engineer [165.56 h] → Procurement Engineer [165.6 h] |
| RHD4PRLOLPOLFS1000 | Material Purchase Order for Screening Container - LOL-LFS | 2026-01-19 → 2026-09-26 A (+250d) | 2026-02-03 → 2026-10-11 A (+250d) |  | 0% → 100% | resources Procurement Engineer [165.56 h] → Procurement Engineer [165.6 h] |
| RHD4PRLOLPOLFS1600 | Material Purchase Order for Standby Diesel Generator - LOL-LFS | 2026-01-17 → 2026-10-01 A (+257d) | 2026-02-01 → 2026-10-11 A (+252d) | 14d → 9d | 0% → 100% | resources Procurement Engineer [165.56 h] → Procurement Engineer [165.6 h] |
| RHD4PRLOLPOLFS1100 | Material Purchase Order for Magnetic type flowmeter - LOL-PO | 2026-01-28 → 2026-11-03 (+279d) | 2026-02-12 → 2026-11-18 (+279d) |  |  | resources Procurement Engineer [165.56 h] → Procurement Engineer [165.6 h] |
| RHD4PRLOLPOLFS1700 | Material Purchase Order for Programmable Logic Controllers and Instrumentation for Process Systems - LOL-LFS | 2026-01-27 → 2026-11-10 (+287d) | 2026-02-11 → 2026-11-25 (+287d) |  |  | resources Procurement Engineer [165.56 h] → Procurement Engineer [165.6 h] |
| 131 | **RHD4-02-002-Long Lead Items - LOL-Manufacturing - MAF** | 2026-01-23 → 2026-11-03 (+284d) | 2026-06-12 → 2027-04-01 (+293d) |  |  |  |
| 1 | **RHD4-02-002-LOL-Manufacturing - MAF-Medium Voltage Network - MV** | 2026-01-23 → 2026-12-03 (+314d) | 2026-05-22 → 2027-04-01 (+314d) |  |  |  |
| RHD4PRLOLMAFMV1500 | Material Fabrication for Unit Substations - LOL-MV | 2026-01-23 → 2026-12-03 (+314d) | 2026-05-22 → 2027-04-01 (+314d) |  |  |  |
| RHD4PRLOLMAFMV1600 | Material Fabrication for Ring Main Unit (RMU) - LOL-MV | 2026-01-23 → 2026-12-03 (+314d) | 2026-05-22 → 2027-04-01 (+314d) |  |  |  |
| 132 | **RHD4-02-002-LOL-Manufacturing - MAF-Security Network - CCTV** | 2026-01-26 → 2026-12-17 (+325d) | 2026-04-25 → 2027-03-16 (+325d) |  |  |  |
| RHD4PRLOLMAFCCTV1000 | Material Fabrication for CCTV Control Room Components - LOL-MAF | 2026-01-26 → 2026-12-17 (+325d) | 2026-04-25 → 2027-03-16 (+325d) |  |  |  |
| 133 | **RHD4-02-002-LOL-Manufacturing - MAF-Lift Stations - LFS** | 2026-01-25 → 2026-11-03 (+282d) | 2026-06-12 → 2027-03-25 (+286d) |  |  |  |
| RHD4PRLOLMAFLFS1000 | Material Fabrication for Screening Container - LOL-MAF | 2026-02-04 → 2026-11-03 (+272d) | 2026-06-03 → 2027-03-02 (+272d) |  |  |  |
| RHD4PRLOLMAFLFS1200 | Material Fabrication for Magnetic type flowmeter - LOL-MAF | 2026-02-05 → 2026-11-03 (+271d) | 2026-06-04 → 2027-03-02 (+271d) |  |  |  |
| RHD4PRLOLMAFLFS1300 | Material Fabrication for Surge Tank - LOL-MAF | 2026-01-28 → 2026-11-03 (+279d) | 2026-05-27 → 2027-03-02 (+279d) |  |  |  |
| RHD4PRLOLMAFLFS1400 | Material Fabrication for Odours scrubbing system - LOL-MAF | 2026-01-25 → 2026-11-03 (+282d) | 2026-05-24 → 2027-03-02 (+282d) |  |  |  |
| RHD4PRLOLMAFLFS1500 | Material Fabrication for JIB Crane - LOL-MAF | 2026-02-06 → 2026-11-03 (+270d) | 2026-06-05 → 2027-03-02 (+270d) |  |  |  |
| RHD4PRLOLMAFLFS1600 | Material Fabrication for Standby Diesel Generator - LOL-MAF | 2026-02-02 → 2026-11-03 (+274d) | 2026-06-01 → 2027-03-02 (+274d) |  |  |  |

| ID | Task | Start | Finish | Complete | Other |
| --- | --- | --- | --- | --- | --- |
| RHD4PRLOLMAFLFS2000 | Material Fabrication for Isolation Penstock - LOL-DOS | 2026-02-04 → 2026-11-03 (+272d) | 2026-06-03 → 2027-03-02 (+272d) |  |  |
| RHD4PRLOLMAFLFS1100 | Material Fabrication for Submersible pumps - LOL-MAF | 2026-02-13 → 2026-11-19 (+279d) | 2026-06-12 → 2027-03-18 (+279d) |  |  |
| RHD4PRLOLMAFLFS1700 | Material Fabrication for Programmable Logic Controllers and Instrumentation for Process Systems - LOL-MAF | 2026-02-12 → 2026-11-26 (+287d) | 2026-06-11 → 2027-03-25 (+287d) |  |  |
| 134 | **RHD4-02-002-Long Lead Items - LOL-Material Delivery on Site - DOS** | 2026-04-26 → 2027-03-03 (+311d) | 2026-06-26 → 2027-04-15 (+293d) |  |  |
| 1 | **RHD4-02-002-LOL-Material Delivery on Site - DOS -Medium Voltage Network - MV** | 2026-05-23 → 2027-04-02 (+314d) | 2026-06-05 → 2027-04-15 (+314d) |  |  |
| RHD4PRLOLDOSMV1500 | Delivery for Unit Substations - LOL-DOS | 2026-05-23 → 2027-04-02 (+314d) | 2026-06-05 → 2027-04-15 (+314d) |  |  |
| RHD4PRLOLDOSMV1600 | Delivery for Ring Main Unit (RMU) - LOL-DOS | 2026-05-23 → 2027-04-02 (+314d) | 2026-06-05 → 2027-04-15 (+314d) |  |  |
| 135 | **RHD4-02-002-LOL-Material Delivery on Site - DOS -Security Network - CCTV** | 2026-04-26 → 2027-03-17 (+325d) | 2026-05-09 → 2027-03-30 (+325d) |  |  |
| RHD4PRLOLDOSCCTV1000 | Delivery for CCTV Control Room Components - LOL-DOS | 2026-04-26 → 2027-03-17 (+325d) | 2026-05-09 → 2027-03-30 (+325d) |  |  |
| 136 | **RHD4-02-002-LOL-Material Delivery on Site - DOS -Lift Stations - LFS** | 2026-05-25 → 2027-03-03 (+282d) | 2026-06-26 → 2027-04-08 (+286d) |  |  |
| RHD4PRLOLDOSLFS1000 | Delivery for Screening Container - LOL-DOS | 2026-06-04 → 2027-03-03 (+272d) | 2026-06-17 → 2027-03-16 (+272d) |  |  |
| RHD4PRLOLDOSLFS1200 | Delivery for Magnetic type flowmeter - LOL-DOS | 2026-06-05 → 2027-03-03 (+271d) | 2026-06-18 → 2027-03-16 (+271d) |  |  |
| RHD4PRLOLDOSLFS1300 | Delivery for Surge Tank - LOL-DOS | 2026-05-28 → 2027-03-03 (+279d) | 2026-06-10 → 2027-03-16 (+279d) |  |  |
| RHD4PRLOLDOSLFS1400 | Delivery for Odours scrubbing system - LOL-DOS | 2026-05-25 → 2027-03-03 (+282d) | 2026-06-07 → 2027-03-16 (+282d) |  |  |
| RHD4PRLOLDOSLFS1500 | Delivery for JIB Crane - LOL-DOS | 2026-06-06 → 2027-03-03 (+270d) | 2026-06-19 → 2027-03-16 (+270d) |  |  |
| RHD4PRLOLDOSLFS1600 | Delivery for Standby Diesel Generator - LOL-DOS | 2026-06-02 → 2027-03-03 (+274d) | 2026-06-15 → 2027-03-16 (+274d) |  |  |
| RHD4PRLOLDOSLFS2000 | Delivery for Isolation Penstock - LOL-DOS | 2026-06-04 → 2027-03-03 (+272d) | 2026-06-17 → 2027-03-16 (+272d) |  |  |
| RHD4PRLOLDOSLFS1100 | Delivery for Submersible pumps - LOL-DOS | 2026-06-13 → 2027-03-19 (+279d) | 2026-06-26 → 2027-04-01 (+279d) |  |  |
| RHD4PRLOLDOSLFS1700 | Delivery for Programmable Logic Controllers and Instrumentation for Process Systems - LOL-DOS | 2026-06-12 → 2027-03-26 (+287d) | 2026-06-25 → 2027-04-08 (+287d) |  |  |
| 1 | **RHD4-02-002-Long Lead Items - LOL-Stageing Time - STAG** | 2026-05-10 → 2027-03-17 (+311d) | 2026-07-02 → 2027-04-21 (+293d) |  |  |
| 1 | **RHD4-02-002-LOL-Material Delivery on Site - DOS -Medium Voltage Network - MV** | 2026-06-06 → 2027-04-16 (+314d) | 2026-06-11 → 2027-04-21 (+314d) |  |  |
| RHD4PRLOLSTAGMV1601 | Staging time for Unit Substations - LOL-STAG | 2026-06-06 → 2027-04-16 (+314d) | 2026-06-11 → 2027-04-21 (+314d) |  |  |
| RHD4PRLOLSTAGMV1602 | Staging time for Ring Main Unit (RMU) - LOL-STAG | 2026-06-06 → 2027-04-16 (+314d) | 2026-06-11 → 2027-04-21 (+314d) |  |  |
| 135 | **RHD4-02-002-LOL-Material Delivery on Site - DOS -Security Network - CCTV** | 2026-05-10 → 2027-03-31 (+325d) | 2026-05-15 → 2027-04-05 (+325d) |  |  |
| RHD4PRLOLSTACCTV1001 | Staging time for CCTV Control Room Components - LOL-STAG | 2026-05-10 → 2027-03-31 (+325d) | 2026-05-15 → 2027-04-05 (+325d) |  |  |
| 136 | **RHD4-02-002-LOL-Material Delivery on Site - DOS -Lift Stations - LFS** | 2026-06-08 → 2027-03-17 (+282d) | 2026-07-02 → 2027-04-14 (+286d) |  |  |
| RHD4PRLOLSTAGLFS1000 | Staging time for Screening Container - LOL-STAG | 2026-06-18 → 2027-03-17 (+272d) | 2026-06-23 → 2027-03-22 (+272d) |  |  |
| RHD4PRLOLSTAGLFS1200 | Staging time for Magnetic type flowmeter - LOL-STAG | 2026-06-19 → 2027-03-17 (+271d) | 2026-06-24 → 2027-03-22 (+271d) |  |  |
| RHD4PRLOLSTAGLFS1300 | Staging time for Surge Tank - LOL-STAG | 2026-06-11 → 2027-03-17 (+279d) | 2026-06-16 → 2027-03-22 (+279d) |  |  |
| RHD4PRLOLSTAGLFS1400 | Staging time for Odours scrubbing system - LOL-STAG | 2026-06-08 → 2027-03-17 (+282d) | 2026-06-13 → 2027-03-22 (+282d) |  |  |
| RHD4PRLOLSTAGLFS1500 | Staging time for JIB Crane - LOL-STAG | 2026-06-20 → 2027-03-17 (+270d) | 2026-06-25 → 2027-03-22 (+270d) |  |  |
| RHD4PRLOLSTAGLFS1600 | Staging time for Standby Diesel Generator - LOL-STAG | 2026-06-16 → 2027-03-17 (+274d) | 2026-06-21 → 2027-03-22 (+274d) |  |  |
| RHD4PRLOLSTAGLFS2000 | Staging time for Isolation Penstock - LOL-STAG | 2026-06-18 → 2027-03-17 (+272d) | 2026-06-23 → 2027-03-22 (+272d) |  |  |
| RHD4PRLOLSTAGLFS1100 | Staging time for Submersible pumps - LOL-STAG | 2026-06-27 → 2027-04-02 (+279d) | 2026-07-02 → 2027-04-07 (+279d) |  |  |
| RHD4PRLOLSTAGLFS1700 | Staging time for Programmable Logic Controllers and Instrumentation for Process Systems - LOL-STAG | 2026-06-26 → 2027-04-09 (+287d) | 2026-07-01 → 2027-04-14 (+287d) |  |  |
| 98 | **RHD4-02-002-Short Lead Items - SHL** | 2025-12-23 → 2025-12-31 (+8d) | 2026-09-03 → 2027-02-25 (+175d) |  |  |
| 99 | **RHD4-02-002-Short Lead Items - SHL-Material Purchase Order - PO** | 2025-12-23 → 2025-12-31 (+8d) | 2026-02-28 → 2026-12-07 (+282d) |  |  |
| 100 | **RHD4-02-002-SHL-Material Purchase Order - PO-Storm Network - ST** |  | 2026-02-07 → 2026-10-18 (+253d) |  |  |
| RHD4PRSHLPOST1000 | Material Purchase Order for GRP pipes - SHL-ST | 2025-12-31 A | 2026-01-12 → 2026-02-09 A (+28d) | 0% → 100% | resources Procurement Engineer [165.56 h] → Procurement Engineer [165.6 h] |
| RHD4PRSHLPOST1100 | Material Purchase Order for UPVC pipes - SHL-ST | 2026-01-01 A | 2026-01-04 → 2026-02-03 A (+30d) | 0% → 100% | resources Procurement Engineer [165.56 h] → Procurement Engineer [165.6 h] |
| RHD4PRSHLPOST1300 | Material Purchase Order for Catch basin - SHL-ST | 2026-01-13 A | 2026-01-19 → 2026-04-04 A (+75d) | 0% → 100% | resources Procurement Engineer [165.56 h] → Procurement Engineer [165.6 h] |
| RHD4PRSHLPOST1200 | Material Purchase Order for HDPE pipes - SHL-ST | 2026-01-18 A | 2026-01-24 → 2026-03-29 A (+64d) | 0% → 100% | resources Procurement Engineer [165.56 h] → Procurement Engineer [165.6 h] |
| RHD4PRSHLPOST1600 | Material Purchase Order for Precast Concrete - SHL-ST | 2026-01-20 A | 2026-01-26 → 2026-06-07 A (+132d) | 0% → 100% | resources Procurement Engineer [165.56 h] → Procurement Engineer [165.6 h] |
| RHD4PRSHLPOST1500 | Material Purchase Order for Tensile reinforcement steel - SHL-ST | 2026-01-25 → 2026-06-01 A (+127d) | 2026-01-31 → 2026-06-07 A (+127d) | 0% → 100% | resources Procurement Engineer [165.56 h] → Procurement Engineer [165.6 h] |
| RHD4PRSHLPOST1700 | Material Purchase Order for Metal Works (Stairs - Manhole Covers) - SHL-ST | 2026-01-25 → 2026-10-01 A (+249d) | 2026-01-31 → 2026-10-07 A (+249d) | 0% → 100% | resources Procurement Engineer [165.56 h] → Procurement Engineer [165.6 h] |
| RHD4PRSHLPOST1400 | Material Purchase Order for Grouted Riprap - SHL-ST | 2026-02-01 → 2026-10-12 A (+253d) | 2026-02-07 → 2026-10-18 A (+253d) | 0% → 100% | resources Procurement Engineer [165.56 h] → Procurement Engineer [165.6 h] |
| 101 | **RHD4-02-002-SHL-Material Purchase Order - PO-Sewage Network - SW** | 2026-01-07 → 2025-12-31 (-7d) | 2026-02-03 → 2026-10-07 (+246d) |  |  |
| RHD4PRSHLPOSW1100 | Material Purchase Order for GRP pipes - SHL-SW | 2026-01-07 → 2025-12-31 A (-7d) | 2026-01-13 → 2026-02-12 A (+30d) | 0% → 100% | resources Procurement Engineer [165.56 h] → Procurement Engineer [165.6 h] |
| RHD4PRSHLPOSW1000 | Material Purchase Order for UPVC pipes - SHL-SW | 2026-01-15 → 2026-01-07 A (-8d) | 2026-01-21 → 2026-02-03 A (+13d) | 0% → 100% | resources Procurement Engineer [165.56 h] → Procurement Engineer [165.6 h] |
| RHD4PRSHLPOSW1200 | Material Purchase Order for Valves - SHL-SW | 2026-01-14 A | 2026-01-20 → 2026-02-07 A (+18d) | 0% → 100% | resources Procurement Engineer [165.56 h] → Procurement Engineer [165.6 h] |
| RHD4PRSHLPOSW1500 | Material Purchase Order for HDPE pipes - SHL-SW | 2026-01-28 → 2026-01-21 A (-7d) | 2026-02-03 → 2026-03-29 A (+54d) | 0% → 100% | resources Procurement Engineer [165.56 h] → Procurement Engineer [165.6 h] |
| RHD4PRSHLPOSW1300 | Material Purchase Order for Precast Concrete - SHL-SW | 2026-01-20 → 2026-08-01 A (+193d) | 2026-01-26 → 2026-08-06 A (+192d) | 0% → 100% | resources Procurement Engineer [165.56 h] → Procurement Engineer [165.6 h] |
| RHD4PRSHLPOSW1400 | Material Purchase Order for Metal Works (Stairs - Manhole Covers) - SHL-SW | 2026-01-24 → 2026-10-01 A (+250d) | 2026-01-29 → 2026-10-07 A (+251d) | 0% → 100% | resources Procurement Engineer [165.56 h] → Procurement Engineer [165.6 h] |
| 102 | **RHD4-02-002-SHL-Material Purchase Order - PO-Potable Water Network - PT** | 2025-12-25 → 2026-01-07 (+13d) | 2026-01-29 → 2026-11-23 (+298d) |  |  |
| RHD4PRSHLPOPT1000 | Material Purchase Order for HDPE pipes - SHL-PT | 2026-01-17 → 2026-01-07 A (-10d) | 2026-01-22 → 2026-03-29 A (+66d) | 0% → 100% | resources Procurement Engineer [165.56 h] → Procurement Engineer [165.6 h] |
| RHD4PRSHLPOPT1100 | Material Purchase Order for Valves - SHL-PT | 2026-01-24 A | 2026-01-29 → 2026-02-26 A (+28d) | 0% → 100% | resources Procurement Engineer [165.56 h] → Procurement Engineer [165.6 h] |
| RHD4PRSHLPOPT1500 | Material Purchase Order for Metal Works (Chamber's Covers) - SHL-PT | 2026-01-06 → 2026-08-04 A (+210d) | 2026-01-12 → 2026-08-10 A (+210d) | 0% → 100% | resources Procurement Engineer [165.56 h] → Procurement Engineer [165.6 h] |
| RHD4PRSHLPOPT1300 | Material Purchase Order for Precast Concrete - SHL-PT | 2026-01-06 → 2026-08-20 A (+226d) | 2026-01-12 → 2026-08-26 A (+226d) | 0% → 100% | resources Procurement Engineer [165.56 h] → Procurement Engineer [165.6 h] |
| RHD4PRSHLPOPT1200 | Material Purchase Order for Fire Hydrants - SHL-PT | 2025-12-25 → 2026-10-01 A (+280d) | 2025-12-31 → 2026-10-07 A (+280d) | 0% → 100% | resources Procurement Engineer [165.56 h] → Procurement Engineer [165.6 h] |
| RHD4PRSHLPOPT1400 | Material Purchase Order for Stem and Surface box - SHL-PT | 2026-01-22 → 2026-11-17 (+299d) | 2026-01-28 → 2026-11-23 (+299d) |  | resources Procurement Engineer [165.56 h] → Procurement Engineer [165.6 h] |
| 103 | **RHD4-02-002-SHL-Material Purchase Order - PO-Irrigation Network - IRR** | 2025-12-30 → 2026-01-07 (+8d) | 2026-02-01 → 2026-11-23 (+295d) |  |  |
| RHD4PRSHLPOIRR1000 | Material Purchase Order for HDPE pipes - SHL-IRR | 2026-01-18 → 2026-01-07 A (-11d) | 2026-01-24 → 2026-03-29 A (+64d) | 0% → 100% | resources Procurement Engineer [165.56 h] → Procurement Engineer [165.6 h] |
| RHD4PRSHLPOIRR1100 | Material Purchase Order for Valves - SHL-IRR | 2026-01-26 A | 2026-02-01 → 2026-02-26 A (+25d) | 0% → 100% | resources Procurement Engineer [165.56 h] → Procurement Engineer [165.6 h] |
| RHD4PRSHLPOIRR1200 | Material Purchase Order for Precast Concrete - SHL-IRR | 2025-12-30 → 2026-08-20 A (+233d) | 2026-01-05 → 2026-08-26 A (+233d) | 0% → 100% | resources Procurement Engineer [165.56 h] → Procurement Engineer [165.6 h] |
| RHD4PRSHLPOIRR1400 | Material Purchase Order for Metal Works (Chamber's Covers) - SHL-IRR | 2026-01-07 → 2026-10-03 A (+269d) | 2026-01-13 → 2026-10-08 A (+268d) | 0% → 100% | resources Procurement Engineer [165.56 h] → Procurement Engineer [165.6 h] |
| RHD4PRSHLPOIRR1300 | Material Purchase Order for Stem and Surface box - SHL-IRR | 2026-01-24 → 2026-11-17 (+297d) | 2026-01-29 → 2026-11-23 (+298d) |  | resources Procurement Engineer [165.56 h] → Procurement Engineer [165.6 h] |
| 104 | **RHD4-02-002-SHL-Material Purchase Order - PO-Medium Voltage - MV** | 2025-12-31 → 2026-01-14 (+14d) | 2026-01-20 → 2026-11-30 (+314d) |  |  |
| RHD4PRSHLPOMV1000 | Material Purchase Order for UPVC Pipes for Duct Banks - SHL-MV | 2025-12-31 → 2026-01-14 A (+14d) | 2026-01-19 → 2026-02-02 A (+14d) | 0% → 100% | resources Procurement Engineer [165.56 h] → Procurement Engineer [165.6 h] |
| RHD4PRSHLPOMV1100 | Material Purchase Order for Medium Voltage Cable 3Cx500 mm2 - SHL-MV | 2026-01-14 → 2026-11-24 (+314d) | 2026-01-20 → 2026-11-30 (+314d) |  | resources Procurement Engineer [165.56 h] → Procurement Engineer [165.6 h] |
| RHD4PRSHLPOMV1200 | Material Purchase Order for Medium Voltage Cable 3Cx50 mm2 - SHL-MV | 2026-01-14 → 2026-11-24 (+314d) | 2026-01-20 → 2026-11-30 (+314d) |  | resources Procurement Engineer [165.56 h] → Procurement Engineer [165.6 h] |

| ID | Task | Start | Finish | Duration | Complete | Other |
| --- | --- | --- | --- | --- | --- | --- |
| RHD4PRSHLPOMV1300 | Material Purchase Order for Straight Joints 3Cx50 mm2 - SHL-MV | 2026-01-14 → 2026-11-24 (+314d) | 2026-01-20 → 2026-11-30 (+314d) |  |  | resources Procurement Engineer [165.56 h] → Procurement Engineer [165.6 h] |
| RHD4PRSHLPOMV1400 | Material Purchase Order for Normally Open Points (Outdoor type) - SHL-MV | 2026-01-14 → 2026-11-24 (+314d) | 2026-01-20 → 2026-11-30 (+314d) |  |  | resources Procurement Engineer [165.56 h] → Procurement Engineer [165.6 h] |
| 105 | **RHD4-02-002-SHL-Material Purchase Order - PO-Low Voltage - LV** | 2025-12-30 → 2026-01-14 (+15d) | 2026-01-20 → 2026-11-23 (+307d) |  |  |  |
| RHD4PRSHLPOLV1000 | Material Purchase Order for UPVC Pipes for Duct Banks - SHL-LV | 2026-01-01 → 2026-01-14 A (+13d) | 2026-01-20 → 2026-02-02 A (+13d) |  | 0% → 100% | resources Procurement Engineer [165.56 h] → Procurement Engineer [165.6 h] |
| RHD4PRSHLPOLV1100 | Material Purchase Order for Low voltage Cables - SHL-LV | 2026-01-06 → 2026-08-27 A (+233d) | 2026-01-12 → 2026-09-02 A (+233d) |  | 0% → 100% | resources Procurement Engineer [165.56 h] → Procurement Engineer [165.6 h] |
| RHD4PRSHLPOLV1200 | Material Purchase Order for Distribution Pillars - SHL-LV | 2026-01-13 → 2026-11-17 (+308d) | 2026-01-19 → 2026-11-23 (+308d) |  |  | resources Procurement Engineer [165.56 h] → Procurement Engineer [165.6 h] |
| RHD4PRSHLPOLV1300 | Material Purchase Order for KWH Meter mounting Frame - SHL-LV | 2026-01-13 → 2026-11-17 (+308d) | 2026-01-19 → 2026-11-23 (+308d) |  |  | resources Procurement Engineer [165.56 h] → Procurement Engineer [165.6 h] |
| RHD4PRSHLPOLV1400 | Material Purchase Order for Low Voltage Drawpit - SHL-LV | 2025-12-30 → 2026-11-17 (+322d) | 2026-01-05 → 2026-11-23 (+322d) |  |  | resources Procurement Engineer [165.56 h] → Procurement Engineer [165.6 h] |
| RHD4PRSHLPOLV1500 | Material Purchase Order for Earthing for Pillars and Panels - SHL-LV | 2026-01-13 → 2026-11-17 (+308d) | 2026-01-19 → 2026-11-23 (+308d) |  |  | resources Procurement Engineer [165.56 h] → Procurement Engineer [165.6 h] |
| 106 | **RHD4-02-002-SHL-Material Purchase Order - PO-Street Lighting Network -SL** | 2026-01-06 → 2026-01-15 (+9d) | 2026-01-26 → 2026-10-06 (+253d) |  |  |  |
| RHD4PRSHLPOSL1000 | Material Purchase Order for UPVC Pipes for Duct Banks - SHL-SL | 2026-01-06 → 2026-01-15 A (+9d) | 2026-01-24 → 2026-02-02 A (+9d) |  | 0% → 100% | resources Procurement Engineer [165.56 h] → Procurement Engineer [165.6 h] |
| RHD4PRSHLPOSL1200 | Material Purchase Order for Lighting Poles - SHL-SL | 2026-01-10 → 2026-08-20 A (+222d) | 2026-01-15 → 2026-08-26 A (+223d) |  | 0% → 100% | resources Procurement Engineer [165.56 h] → Procurement Engineer [165.6 h] |
| RHD4PRSHLPOSL1400 | Material Purchase Order for Street Lighting Drawpit - SHL-SL | 2026-01-07 → 2026-09-17 A (+253d) | 2026-01-13 → 2026-09-24 A (+254d) |  | 0% → 100% | resources Procurement Engineer [165.56 h] → Procurement Engineer [165.6 h] |
| RHD4PRSHLPOSL1300 | Material Purchase Order for Street Lighting Luminaire - SHL-SL | 2026-01-20 → 2026-09-27 A (+250d) | 2026-01-26 → 2026-10-03 A (+250d) |  | 0% → 100% | resources Procurement Engineer [165.56 h] → Procurement Engineer [165.6 h] |
| RHD4PRSHLPOSL1100 | Material Purchase Order for Street Lighting Cables - SHL-SL | 2026-01-20 → 2026-09-30 A (+253d) | 2026-01-26 → 2026-10-06 A (+253d) |  | 0% → 100% | resources Procurement Engineer [165.56 h] → Procurement Engineer [165.6 h] |
| 108 | **RHD4-02-002-SHL-Material Purchase Order - PO-Telecommunications Network - TC** | 2026-01-25 → 2026-01-22 (-3d) | 2026-02-26 → 2026-09-07 (+193d) |  |  |  |
| RHD4PRSHLPOTC1100 | Material Purchase Order for HDPE Road Crossings Ducts - SHL-TC | 2026-01-25 → 2026-01-22 A (-3d) | 2026-02-05 → 2026-03-29 A (+52d) |  | 0% → 100% | resources Procurement Engineer [165.56 h] → Procurement Engineer [165.6 h] |
| RHD4PRSHLPOTC1000 | Material Purchase Order for HDPE Ducts - SHL-TC | 2026-02-07 → 2026-01-29 A (-9d) | 2026-02-18 → 2026-03-29 A (+39d) |  | 0% → 100% | resources Procurement Engineer [165.56 h] → Procurement Engineer [165.6 h] |
| RHD4PRSHLPOTC1200 | Material Purchase Order for Telecommunications Manhole - SHL-TC | 2026-02-19 → 2026-09-01 A (+194d) | 2026-02-26 → 2026-09-07 A (+193d) |  | 0% → 100% | resources Procurement Engineer [165.56 h] → Procurement Engineer [165.6 h] |
| 109 | **RHD4-02-002-SHL-Material Purchase Order - PO-Information and Communication Technologies - ICT** | 2026-01-25 → 2026-01-22 (-3d) | 2026-02-17 → 2026-03-29 (+40d) |  |  |  |
| RHD4PRSHLPOICT1100 | Material Purchase Order for HDPE Road Crossings Ducts - SHL-ICT | 2026-01-25 → 2026-01-22 A (-3d) | 2026-02-01 → 2026-03-29 A (+56d) |  | 0% → 100% | resources Procurement Engineer [165.56 h] → Procurement Engineer [165.6 h] |
| RHD4PRSHLPOICT1000 | Material Purchase Order for HDPE Ducts - SHL-ICT | 2026-02-02 → 2026-01-29 A (-4d) | 2026-02-09 → 2026-03-29 A (+48d) |  | 0% → 100% | resources Procurement Engineer [165.56 h] → Procurement Engineer [165.6 h] |
| RHD4PRSHLPOICT1200 | Material Purchase Order for Telecommunications Manhole - SHL-ICT | 2026-02-10 → 2026-02-05 A (-5d) | 2026-02-17 → 2026-03-29 A (+40d) |  | 0% → 100% | resources Procurement Engineer [165.56 h] → Procurement Engineer [165.6 h] |
| 110 | **RHD4-02-002-SHL-Material Purchase Order - PO-Security Network - CCTV** | 2026-01-29 → 2026-11-10 (+285d) | 2026-02-28 → 2026-12-07 (+282d) |  |  |  |
| RHD4PRSHLPOCCTV1000 | Material Purchase Order for CCTV Network Poles - SHL-CCTV | 2026-01-29 → 2026-11-10 (+285d) | 2026-02-04 → 2026-11-16 (+285d) |  |  |  |
| RHD4PRSHLPOCCTV1200 | Material Purchase Order for CCTV Panels and Panel's Components - SHL-CCTV | 2026-02-05 → 2026-11-17 (+285d) | 2026-02-11 → 2026-11-23 (+285d) |  |  |  |
| RHD4PRSHLPOCCTV1300 | Material Purchase Order for CCTV Fiber Optic Cables - SHL-CCTV | 2026-02-12 → 2026-11-24 (+285d) | 2026-02-18 → 2026-11-30 (+285d) |  |  |  |
| RHD4PRSHLPOCCTV1100 | Material Purchase Order for CCTV Network Cameras - SHL-CCTV | 2026-02-19 → 2026-12-01 (+285d) | 2026-02-28 → 2026-12-07 (+282d) | 7d → 6d |  |  |
| 111 | **RHD4-02-002-SHL-Material Purchase Order - PO-Road Works - RD** | 2025-12-30 → 2026-08-11 (+224d) | 2026-02-17 → 2026-11-30 (+286d) |  |  |  |
| RHD4PRSHLPORD1100 | Material Purchase Order for Bituminous Asphalt Layers - SHL-RD | 2026-01-06 → 2026-08-11 A (+217d) | 2026-01-12 → 2026-08-17 A (+217d) |  | 0% → 100% | resources Procurement Engineer [165.56 h] → Procurement Engineer [165.6 h] |
| RHD4PRSHLPORD1000 | Material Purchase Order for Aggregate Base Courses - SHL-RD | 2025-12-30 → 2026-08-20 A (+233d) | 2026-01-05 → 2026-08-26 A (+233d) |  | 0% → 100% | resources Procurement Engineer [165.56 h] → Procurement Engineer [165.6 h] |
| RHD4PRSHLPORD1200 | Material Purchase Order for Precast Concrete Curbstone - SHL-RD | 2026-01-13 → 2026-10-01 A (+261d) | 2026-01-19 → 2026-10-07 A (+261d) |  | 0% → 100% | resources Procurement Engineer [165.56 h] → Procurement Engineer [165.6 h] |
| RHD4PRSHLPORD1600 | Material Purchase Order for Traffic Signage - SHL-RD | 2026-01-20 → 2026-11-03 (+287d) | 2026-01-26 → 2026-11-09 (+287d) |  |  | resources Procurement Engineer [165.56 h] → Procurement Engineer [165.6 h] |
| RHD4PRSHLPORD1300 | Material Purchase Order for Interlock Precast Concrete Unit Paving - SHL-RD | 2026-01-28 → 2026-11-10 (+286d) | 2026-02-03 → 2026-11-16 (+286d) |  |  | resources Procurement Engineer [165.56 h] → Procurement Engineer [165.6 h] |
| RHD4PRSHLPORD1400 | Material Purchase Order for Wheel Stopper - SHL-RD | 2026-02-04 → 2026-11-17 (+286d) | 2026-02-10 → 2026-11-23 (+286d) |  |  | resources Procurement Engineer [165.56 h] → Procurement Engineer [165.6 h] |
| RHD4PRSHLPORD1500 | Material Purchase Order for Pavement Marking - SHL-RD | 2026-02-11 → 2026-11-24 (+286d) | 2026-02-17 → 2026-11-30 (+286d) |  |  | resources Procurement Engineer [165.56 h] → Procurement Engineer [165.6 h] |
| 112 | **RHD4-02-002-SHL-Material Purchase Order - PO-Lift Stations - LFS** | 2025-12-23 → 2026-06-01 (+160d) | 2026-02-02 → 2026-11-30 (+301d) |  |  |  |
| RHD4PRSHLPOLFS1200 | Material Purchase Order for Bituminous Sheet Waterproofing - SHL-LFS | 2026-01-08 → 2026-06-01 A (+144d) | 2026-01-14 → 2026-06-07 A (+144d) |  | 0% → 100% | resources Procurement Engineer [165.56 h] → Procurement Engineer [165.6 h] |
| RHD4PRSHLPOLFS1700 | Material Purchase Order for Ductile Iron Pipes & Fittings - SHL-LFS | 2025-12-30 → 2026-08-11 A (+224d) | 2026-01-05 → 2026-08-17 A (+224d) |  | 0% → 100% | resources Procurement Engineer [165.56 h] → Procurement Engineer [165.6 h] |
| RHD4PRSHLPOLFS1800 | Material Purchase Order for Sewage Lift Station Valves - SHL-LFS | 2026-01-06 → 2026-08-18 A (+224d) | 2026-01-12 → 2026-08-24 A (+224d) |  | 0% → 100% | resources Procurement Engineer [165.56 h] → Procurement Engineer [165.6 h] |
| RHD4PRSHLPOLFS1900 | Material Purchase Order for Basket screen - SHL-LFS | 2026-01-21 → 2026-09-27 A (+249d) | 2026-01-27 → 2026-10-03 A (+249d) |  | 0% → 100% | resources Procurement Engineer [165.56 h] → Procurement Engineer [165.6 h] |
| RHD4PRSHLPOLFS2600 | Material Purchase Order for Low Voltage Cables - SHL-LFS | 2026-01-13 → 2026-10-01 A (+261d) | 2026-01-19 → 2026-10-07 A (+261d) |  | 0% → 100% | resources Procurement Engineer [165.56 h] → Procurement Engineer [165.6 h] |
| RHD4PRSHLPOLFS2700 | Material Purchase Order for Lighting Fixtures - SHL-LFS | 2026-01-27 → 2026-10-13 A (+259d) | 2026-02-02 → 2026-10-19 A (+259d) |  | 0% → 100% | resources Procurement Engineer [165.56 h] → Procurement Engineer [165.6 h] |
| RHD4PRSHLPOLFS1100 | Material Purchase Order for Roof Waterproofing System - SHL-LFS | 2025-12-31 → 2026-11-03 (+307d) | 2026-01-06 → 2026-11-09 (+307d) |  |  | resources Procurement Engineer [165.56 h] → Procurement Engineer [165.6 h] |
| RHD4PRSHLPOLFS1600 | Material Purchase Order for Epoxy Coating - SHL-LFS | 2026-01-18 → 2026-11-03 (+289d) | 2026-01-24 → 2026-11-09 (+289d) |  |  | resources Procurement Engineer [165.56 h] → Procurement Engineer [165.6 h] |
| RHD4PRSHLPOLFS2100 | Material Purchase Order for UPVC Pipes for Sanitary Drain - SHL-LFS | 2025-12-30 → 2026-11-03 (+308d) | 2026-01-05 → 2026-11-09 (+308d) |  |  | resources Procurement Engineer [165.56 h] → Procurement Engineer [165.6 h] |
| RHD4PRSHLPOLFS2300 | Material Purchase Order for Motor Control Center (MCC) - SHL-LFS | 2026-01-04 → 2026-11-03 (+303d) | 2026-01-17 → 2026-11-16 (+303d) |  |  | resources Procurement Engineer [165.56 h] → Procurement Engineer [165.6 h] |
| RHD4PRSHLPOLFS2400 | Material Purchase Order for lighting and power panel boards - SHL-LFS | 2026-01-15 → 2026-11-03 (+292d) | 2026-01-21 → 2026-11-09 (+292d) |  |  | resources Procurement Engineer [165.56 h] → Procurement Engineer [165.6 h] |
| RHD4PRSHLPOLFS3000 | Material Purchase Order for Fire Alarm System - SHL-LFS | 2025-12-23 → 2026-11-03 (+315d) | 2025-12-29 → 2026-11-09 (+315d) |  |  | resources Procurement Engineer [165.56 h] → Procurement Engineer [165.6 h] |
| RHD4PRSHLPOLFS1300 | Material Purchase Order for Fluid-Applied Waterproofing - SHL-LFS | 2026-01-20 → 2026-11-10 (+294d) | 2026-01-26 → 2026-11-16 (+294d) |  |  | resources Procurement Engineer [165.56 h] → Procurement Engineer [165.6 h] |
| RHD4PRSHLPOLFS2800 | Material Purchase Order for Wiring Devices - SHL-LFS | 2025-12-27 → 2026-11-10 (+318d) | 2026-01-01 → 2026-11-16 (+319d) |  |  | resources Procurement Engineer [165.56 h] → Procurement Engineer [165.6 h] |
| RHD4PRSHLPOLFS1000 | Material Purchase Order for Metal Ladder and checkered Plate - SHL-LFS | 2026-01-26 → 2026-11-17 (+295d) | 2026-02-01 → 2026-11-23 (+295d) |  |  | resources Procurement Engineer [165.56 h] → Procurement Engineer [165.6 h] |
| RHD4PRSHLPOLFS1400 | Material Purchase Order for Metal Doors and Access Doors and Frames - SHL-LFS | 2025-12-27 → 2026-11-17 (+325d) | 2026-01-01 → 2026-11-23 (+326d) |  |  | resources Procurement Engineer [165.56 h] → Procurement Engineer [165.6 h] |
| RHD4PRSHLPOLFS2200 | Material Purchase Order for wall mounted Split/AC - SHL-LFS | 2026-01-19 → 2026-11-17 (+302d) | 2026-01-25 → 2026-11-23 (+302d) |  |  | resources Procurement Engineer [165.56 h] → Procurement Engineer [165.6 h] |
| RHD4PRSHLPOLFS2900 | Material Purchase Order for Enclosed Switches and Circuit Breakers - SHL-LFS | 2025-12-27 → 2026-11-17 (+325d) | 2026-01-01 → 2026-11-23 (+326d) |  |  | resources Procurement Engineer [165.56 h] → Procurement Engineer [165.6 h] |
| RHD4PRSHLPOLFS1500 | Material Purchase Order for Painting - SHL-LFS | 2026-01-04 → 2026-11-24 (+324d) | 2026-01-10 → 2026-11-30 (+324d) |  |  | resources Procurement Engineer [165.56 h] → Procurement Engineer [165.6 h] |
| RHD4PRSHLPOLFS2500 | Material Purchase Order for Earthing for Lift Stations - SHL-LFS | 2026-01-03 → 2026-11-24 (+325d) | 2026-01-08 → 2026-11-30 (+326d) |  |  | resources Procurement Engineer [165.56 h] → Procurement Engineer [165.6 h] |
| RHD4PRSHLPOLFS3100 | Material Purchase Order for Fences and Gates - SHL-LFS | 2026-01-11 → 2026-11-24 (+317d) | 2026-01-17 → 2026-11-30 (+317d) |  |  | resources Procurement Engineer [165.56 h] → Procurement Engineer [165.6 h] |
| 113 | **RHD4-02-002-Short Lead Items - SHL-Material Delivery on Site - DOS** | 2025-12-30 → 2026-01-13 (+14d) | 2026-08-28 → 2027-02-19 (+175d) |  |  |  |
| 114 | **RHD4-02-002-SHL-Material Delivery on Site - DOS -Storm Network - ST** | 2026-01-05 → 2026-01-13 (+8d) | 2026-08-28 → 2026-11-16 (+80d) |  |  |  |
| 1 | **RHD4-02-002-SHL-Material Delivery on Site - DOS -Storm Network - ST - Zone 1** | 2026-01-27 → 2026-03-01 (+33d) | 2026-08-22 → 2026-11-15 (+85d) |  |  |  |
| RHD4PRSHLDOSST1000 | Delivery for GRP pipes Zone 1 - SHL-DOS(Completed) | 2026-07-18 → 2026-03-01 A (-139d) | 2026-08-16 → 2026-08-03 A (-13d) |  | 0% → 100% |  |
| RHD4PRSHLDOSST1100 | Delivery for UPVC pipes Zone 1 - SHL-DOS | 2026-02-02 → 2026-09-01 A (+211d) | 2026-02-07 → 2026-09-06 A (+211d) |  | 0% → 100% |  |
| RHD4PRSHLDOSST1300 | Delivery for Catch basin Zone 1 - SHL-DOS | 2026-08-17 → 2026-09-18 A (+32d) | 2026-08-22 → 2026-09-23 A (+32d) |  | 0% → 100% |  |
| RHD4PRSHLDOSST1600 | Delivery for Precast Concrete Zone 1 - SHL-DOS | 2026-01-27 → 2026-09-22 A (+238d) | 2026-02-01 → 2026-09-27 A (+238d) |  | 0% → 100% |  |
| RHD4PRSHLDOSST1700 | Delivery for Metal Works (Stairs - Manhole Covers) Zone 1 - SHL-DOS | 2026-02-01 → 2026-10-05 A (+246d) | 2026-02-06 → 2026-10-10 A (+246d) |  | 0% → 100% |  |
| RHD4PRSHLDOSST1400 | Delivery for Grouted Riprap Zone 1 - SHL-DOS | 2026-02-08 → 2026-11-10 (+275d) | 2026-02-13 → 2026-11-15 (+275d) |  |  |  |
| 2 | **RHD4-02-002-SHL-Material Delivery on Site - DOS -Storm Network - ST - Zone 2** | 2026-01-05 → 2026-02-16 (+42d) | 2026-08-22 → 2026-11-15 (+85d) |  |  |  |
| RHD4PRSHLDOSST1001 | Delivery for GRP pipes Zone 2 - SHL-DOS(Completed) | 2026-07-18 → 2026-02-16 A (-152d) | 2026-08-16 → 2026-08-03 A (-13d) |  | 0% → 100% |  |
| RHD4PRSHLDOSST1501 | Delivery for Tensile reinforcement steel Zone 2 - SHL-DOS | 2026-02-01 → 2026-06-08 A (+127d) | 2026-02-06 → 2026-06-13 A (+127d) |  | 0% → 100% |  |

| ID | Task | Start | Finish | Complete |
| --- | --- | --- | --- | --- |
| RHD4PRSHLDOSST1601 | Delivery for Precast Concrete Zone 2 - SHL-DOS | 2026-01-27 → 2026-09-05 A (+221d) | 2026-02-01 → 2026-10-06 A (+247d) | 0% → 100% |
| RHD4PRSHLDOSST1101 | Delivery for UPVC pipes Zone 2 - SHL-DOS | 2026-01-05 → 2026-09-30 A (+268d) | 2026-01-10 → 2026-10-05 A (+268d) | 0% → 100% |
| RHD4PRSHLDOSST1301 | Delivery for Catch basin Zone 2 - SHL-DOS | 2026-08-17 → 2026-10-07 A (+51d) | 2026-08-22 → 2026-10-12 A (+51d) | 0% → 100% |
| RHD4PRSHLDOSST1701 | Delivery for Metal Works (Stairs - Manhole Covers) Zone 2 - SHL-DOS | 2026-02-01 → 2026-11-05 (+277d) | 2026-02-06 → 2026-11-10 (+277d) |  |
| RHD4PRSHLDOSST1401 | Delivery for Grouted Riprap Zone 2 - SHL-DOS | 2026-02-08 → 2026-11-10 (+275d) | 2026-02-13 → 2026-11-15 (+275d) |  |
| 3 | **RHD4-02-002-SHL-Material Delivery on Site - DOS -Storm Network - ST - Zone 3** | 2026-01-27 → 2026-09-03 (+219d) | 2026-07-17 → 2026-11-10 (+116d) |  |
| RHD4PRSHLDOSST1602 | Delivery for Precast Concrete Zone 3 - SHL-DOS | 2026-01-27 → 2026-09-03 A (+219d) | 2026-02-01 → 2026-09-08 A (+219d) | 0% → 100% |
| RHD4PRSHLDOSST1102 | Delivery for UPVC pipes Zone 3 - SHL-DOS | 2026-02-02 → 2026-09-09 A (+219d) | 2026-02-07 → 2026-09-14 A (+219d) | 0% → 100% |
| RHD4PRSHLDOSST1302 | Delivery for Catch basin Zone 3 - SHL-DOS | 2026-07-12 → 2026-09-12 A (+62d) | 2026-07-17 → 2026-09-17 A (+62d) | 0% → 100% |
| RHD4PRSHLDOSST1702 | Delivery for Metal Works (Stairs - Manhole Covers) Zone 3 - SHL-DOS | 2026-02-01 → 2026-11-05 (+277d) | 2026-02-06 → 2026-11-10 (+277d) |  |
| 4 | **RHD4-02-002-SHL-Material Delivery on Site - DOS -Storm Network - ST - Zone 4** | 2026-01-20 → 2026-02-16 (+27d) | 2026-07-11 → 2026-11-10 (+122d) |  |
| RHD4PRSHLDOSST1003 | Delivery for GRP pipes Zone 4 - SHL-DOS(Completed) | 2026-06-12 → 2026-02-16 A (-116d) | 2026-07-11 → 2026-08-03 A (+23d) | 0% → 100% |
| RHD4PRSHLDOSST1103 | Delivery for UPVC pipes Zone 4 - SHL-DOS | 2026-02-02 → 2026-09-03 A (+213d) | 2026-02-07 → 2026-09-08 A (+213d) | 0% → 100% |
| RHD4PRSHLDOSST1303 | Delivery for Catch basin Zone 4 - SHL-DOS | 2026-01-20 → 2026-09-03 A (+226d) | 2026-01-25 → 2026-09-08 A (+226d) | 0% → 100% |
| RHD4PRSHLDOSST1603 | Delivery for Precast Concrete Zone 4 - SHL-DOS | 2026-01-27 → 2026-09-03 A (+219d) | 2026-02-01 → 2026-09-08 A (+219d) | 0% → 100% |
| RHD4PRSHLDOSST1703 | Delivery for Metal Works (Stairs - Manhole Covers) Zone 4 - SHL-DOS | 2026-02-01 → 2026-11-05 (+277d) | 2026-02-06 → 2026-11-10 (+277d) |  |
| 5 | **RHD4-02-002-SHL-Material Delivery on Site - DOS -Storm Network - ST - Zone 5** | 2026-01-05 → 2026-02-16 (+42d) | 2026-03-19 → 2026-11-10 (+236d) |  |
| RHD4PRSHLDOSST1004 | Delivery for GRP pipes Zone 5 - SHL-DOS(Completed) | 2026-02-12 → 2026-02-16 A (+4d) | 2026-03-13 → 2026-08-03 A (+143d) | 0% → 100% |
| RHD4PRSHLDOSST1604 | Delivery for Precast Concrete Zone 5 - SHL-DOS | 2026-01-27 → 2026-06-08 A (+132d) | 2026-02-01 → 2026-06-30 A (+149d) | 0% → 100% |
| RHD4PRSHLDOSST1504 | Delivery for Tensile reinforcement steel Zone 5 - SHL-DOS | 2026-02-07 → 2026-06-15 A (+128d) | 2026-02-12 → 2026-06-20 A (+128d) | 0% → 100% |
| RHD4PRSHLDOSST1104 | Delivery for UPVC pipes Zone 5 - SHL-DOS | 2026-01-05 → 2026-08-03 A (+210d) | 2026-01-10 → 2026-08-08 A (+210d) | 0% → 100% |
| RHD4PRSHLDOSST1304 | Delivery for Catch basin Zone 5 - SHL-DOS | 2026-03-14 → 2026-08-05 A (+144d) | 2026-03-19 → 2026-08-18 A (+152d) | 0% → 100% |
| RHD4PRSHLDOSST1204 | Delivery for HDPE pipes Zone 5 - SHL-DOS | 2026-03-14 → 2026-08-09 A (+148d) | 2026-03-19 → 2026-08-14 A (+148d) | 0% → 100% |
| RHD4PRSHLDOSST1704 | Delivery for Metal Works (Stairs - Manhole Covers) Zone 5 - SHL-DOS | 2026-02-01 → 2026-11-05 (+277d) | 2026-02-06 → 2026-11-10 (+277d) |  |
| 6 | **RHD4-02-002-SHL-Material Delivery on Site - DOS -Storm Network - ST - Zone 6** | 2026-01-05 → 2026-01-13 (+8d) | 2026-02-11 → 2026-11-10 (+272d) |  |
| RHD4PRSHLDOSST1005 | Delivery for GRP pipes Zone 6 - SHL-DOS(Completed) | 2026-01-13 A | 2026-02-11 → 2026-08-03 A (+173d) | 0% → 100% |
| RHD4PRSHLDOSST1105 | Delivery for UPVC pipes Zone 6 - SHL-DOS | 2026-01-05 → 2026-09-03 A (+241d) | 2026-01-10 → 2026-09-08 A (+241d) | 0% → 100% |
| RHD4PRSHLDOSST1305 | Delivery for Catch basin Zone 6 - SHL-DOS | 2026-01-20 → 2026-09-03 A (+226d) | 2026-01-25 → 2026-09-08 A (+226d) | 0% → 100% |
| RHD4PRSHLDOSST1605 | Delivery for Precast Concrete Zone 6 - SHL-DOS | 2026-01-27 → 2026-09-03 A (+219d) | 2026-02-01 → 2026-09-08 A (+219d) | 0% → 100% |
| RHD4PRSHLDOSST1705 | Delivery for Metal Works (Stairs - Manhole Covers) Zone 6 - SHL-DOS | 2026-02-01 → 2026-11-05 (+277d) | 2026-02-06 → 2026-11-10 (+277d) |  |
| 8 | **RHD4-02-002-SHL-Material Delivery on Site - DOS -Storm Network - ST - Zone 7** | 2026-01-27 → 2026-02-16 (+20d) | 2026-04-18 → 2026-11-16 (+212d) |  |
| RHD4PRSHLDOSST1006 | Delivery for GRP pipes Zone 7 - SHL-DOS(Completed) | 2026-03-14 → 2026-02-16 A (-26d) | 2026-04-12 → 2026-08-03 A (+113d) | 0% → 100% |
| RHD4PRSHLDOSST1106 | Delivery for UPVC pipes Zone 7 - SHL-DOS | 2026-02-02 → 2026-08-03 A (+182d) | 2026-02-07 → 2026-08-08 A (+182d) | 0% → 100% |
| RHD4PRSHLDOSST1206 | Delivery for HDPE pipes Zone 7 - SHL-DOS | 2026-02-02 → 2026-08-03 A (+182d) | 2026-02-07 → 2026-08-08 A (+182d) | 0% → 100% |
| RHD4PRSHLDOSST1606 | Delivery for Precast Concrete Zone 7 - SHL-DOS | 2026-01-27 → 2026-08-03 A (+188d) | 2026-02-01 → 2026-08-08 A (+188d) | 0% → 100% |
| RHD4PRSHLDOSST1306 | Delivery for Catch basin Zone 7 - SHL-DOS | 2026-04-13 → 2026-08-18 A (+127d) | 2026-04-18 → 2026-08-23 A (+127d) | 0% → 100% |
| RHD4PRSHLDOSST1706 | Delivery for Metal Works (Stairs - Manhole Covers) Zone 7 - SHL-DOS | 2026-02-07 → 2026-11-11 (+277d) | 2026-02-12 → 2026-11-16 (+277d) |  |
| 7 | **RHD4-02-002-SHL-Material Delivery on Site - DOS -Storm Network - ST - Zone 8** | 2026-01-27 → 2026-04-13 (+76d) | 2026-05-18 → 2026-11-16 (+182d) |  |
| RHD4PRSHLDOSST1007 | Delivery for GRP pipes Zone 8 - SHL-DOS(Completed) | 2026-04-13 A | 2026-05-12 → 2026-08-03 A (+83d) | 0% → 100% |
| RHD4PRSHLDOSST1107 | Delivery for UPVC pipes Zone 8 - SHL-DOS | 2026-02-02 → 2026-08-19 A (+198d) | 2026-02-07 → 2026-08-24 A (+198d) | 0% → 100% |
| RHD4PRSHLDOSST1307 | Delivery for Catch basin Zone 8 - SHL-DOS | 2026-05-13 → 2026-08-19 A (+98d) | 2026-05-18 → 2026-08-24 A (+98d) | 0% → 100% |
| RHD4PRSHLDOSST1607 | Delivery for Precast Concrete Zone 8 - SHL-DOS | 2026-01-27 → 2026-08-19 A (+204d) | 2026-02-01 → 2026-08-24 A (+204d) | 0% → 100% |
| RHD4PRSHLDOSST1707 | Delivery for Metal Works (Stairs - Manhole Covers) Zone 8 - SHL-DOS | 2026-02-07 → 2026-11-11 (+277d) | 2026-02-12 → 2026-11-16 (+277d) |  |
| 9 | **RHD4-02-002-SHL-Material Delivery on Site - DOS -Storm Network - ST - Zone 9** | 2026-02-01 → 2026-02-16 (+15d) | 2026-08-28 → 2026-11-10 (+74d) |  |
| RHD4PRSHLDOSST1008 | Delivery for GRP pipes Zone 9 - SHL-DOS(Completed) | 2026-05-13 → 2026-02-16 A (-86d) | 2026-06-11 → 2026-08-03 A (+53d) | 0% → 100% |
| RHD4PRSHLDOSST1108 | Delivery for UPVC pipes Zone 9 - SHL-DOS | 2026-02-08 → 2026-08-18 A (+191d) | 2026-02-13 → 2026-08-23 A (+191d) | 0% → 100% |
| RHD4PRSHLDOSST1308 | Delivery for Catch basin Zone 9 - SHL-DOS | 2026-08-23 → 2026-08-18 A (-5d) | 2026-08-28 → 2026-08-23 A (-5d) | 0% → 100% |
| RHD4PRSHLDOSST1608 | Delivery for Precast Concrete Zone 9 - SHL-DOS | 2026-02-02 → 2026-08-18 A (+197d) | 2026-02-07 → 2026-08-23 A (+197d) | 0% → 100% |
| RHD4PRSHLDOSST1708 | Delivery for Metal Works (Stairs - Manhole Covers) Zone 9 - SHL-DOS | 2026-02-01 → 2026-11-05 (+277d) | 2026-02-06 → 2026-11-10 (+277d) |  |
| 115 | **RHD4-02-002-SHL-Material Delivery on Site - DOS -Sewage Network - SW** |  | 2026-05-18 → 2026-11-20 (+186d) |  |
| 1 | **RHD4-02-002-SHL-Material Delivery on Site - DOS -Sewage Network - SW - Zone 1** | 2026-01-27 → 2026-11-03 (+280d) | 2026-02-24 → 2026-11-19 (+268d) |  |
| RHD4PRSHLDOSSW1300 | Delivery for Precast Concrete Zone 1 - SHL-DOS | 2026-01-27 → 2026-11-03 (+280d) | 2026-02-01 → 2026-11-08 (+280d) |  |
| RHD4PRSHLDOSSW1000 | Delivery for UPVC pipes Zone 1 - SHL-DOS | 2026-02-13 → 2026-11-08 (+268d) | 2026-02-18 → 2026-11-13 (+268d) |  |
| RHD4PRSHLDOSSW1400 | Delivery for Metal Works (Stairs - Manhole Covers) Zone 1 - SHL-DOS | 2026-02-19 → 2026-11-14 (+268d) | 2026-02-24 → 2026-11-19 (+268d) |  |
| 2 | **RHD4-02-002-SHL-Material Delivery on Site - DOS -Sewage Network - SW - Zone 2** | 2026-01-27 → 2026-11-03 (+280d) | 2026-02-13 → 2026-11-20 (+280d) |  |
| RHD4PRSHLDOSSW1301 | Delivery for Precast Concrete Zone 2 - SHL-DOS | 2026-01-27 → 2026-11-03 (+280d) | 2026-02-01 → 2026-11-08 (+280d) |  |
| RHD4PRSHLDOSSW1401 | Delivery for Metal Works (Stairs - Manhole Covers) Zone 2 - SHL-DOS | 2026-01-30 → 2026-11-03 (+277d) | 2026-02-04 → 2026-11-08 (+277d) |  |
| RHD4PRSHLDOSSW1101 | Delivery for GRP pipes Zone 2 - SHL-DOS | 2026-02-02 → 2026-11-09 (+280d) | 2026-02-07 → 2026-11-14 (+280d) |  |
| RHD4PRSHLDOSSW1001 | Delivery for UPVC pipes Zone 2 - SHL-DOS | 2026-02-08 → 2026-11-15 (+280d) | 2026-02-13 → 2026-11-20 (+280d) |  |
| 3 | **RHD4-02-002-SHL-Material Delivery on Site - DOS -Sewage Network - SW - Zone 3** | 2026-01-14 → 2026-11-03 (+293d) | 2026-02-09 → 2026-11-14 (+278d) |  |
| RHD4PRSHLDOSSW1102 | Delivery for GRP pipes Zone 3 - SHL-DOS | 2026-01-14 → 2026-11-03 (+293d) | 2026-01-19 → 2026-11-08 (+293d) |  |
| RHD4PRSHLDOSSW1302 | Delivery for Precast Concrete Zone 3 - SHL-DOS | 2026-01-27 → 2026-11-03 (+280d) | 2026-02-01 → 2026-11-08 (+280d) |  |
| RHD4PRSHLDOSSW1402 | Delivery for Metal Works (Stairs - Manhole Covers) Zone 3 - SHL-DOS | 2026-01-30 → 2026-11-03 (+277d) | 2026-02-04 → 2026-11-08 (+277d) |  |
| RHD4PRSHLDOSSW1502 | Delivery for HDPE pipes Zone 3 - SHL-DOS | 2026-02-04 → 2026-11-03 (+272d) | 2026-02-09 → 2026-11-08 (+272d) |  |
| RHD4PRSHLDOSSW1202 | Delivery for Valves Zone 3 - SHL-DOS | 2026-01-21 → 2026-11-09 (+292d) | 2026-01-26 → 2026-11-14 (+292d) |  |
| 4 | **RHD4-02-002-SHL-Material Delivery on Site - DOS -Sewage Network - SW - Zone 4** |  | 2026-02-12 → 2026-11-19 (+280d) |  |
| RHD4PRSHLDOSSW1103 | Delivery for GRP pipes Zone 4 - SHL-DOS(Completed) | 2026-01-14 A | 2026-02-12 → 2026-08-03 A (+172d) | 0% → 100% |
| RHD4PRSHLDOSSW1203 | Delivery for Valves Zone 4 - SHL-DOS | 2026-01-21 → 2026-11-03 (+286d) | 2026-01-26 → 2026-11-08 (+286d) |  |
| RHD4PRSHLDOSSW1003 | Delivery for UPVC pipes Zone 4 - SHL-DOS | 2026-01-22 → 2026-11-08 (+290d) | 2026-01-27 → 2026-11-13 (+290d) |  |
| RHD4PRSHLDOSSW1303 | Delivery for Precast Concrete Zone 4 - SHL-DOS | 2026-02-02 → 2026-11-09 (+280d) | 2026-02-07 → 2026-11-14 (+280d) |  |

| ID | Task | Start | Finish | Complete | Predecessors |
| --- | --- | --- | --- | --- | --- |
| RHD4PRSHLDOSSW1403 | Delivery for Metal Works (Stairs - Manhole Covers) Zone 4 - SHL-DOS | 2026-01-30 → 2026-11-14 (+288d) | 2026-02-04 → 2026-11-19 (+288d) |  |  |
| 7 | **RHD4-02-002-SHL-Material Delivery on Site - DOS -Sewage Network - SW - Zone 5** |  | 2026-02-26 → 2026-11-14 (+261d) |  |  |
| RHD4PRSHLDOSSW1104 | Delivery for GRP pipes Zone 5 - SHL-DOS(Completed) | 2026-01-14 A | 2026-02-07 → 2026-08-03 A (+177d) | 0% → 100% |  |
| RHD4PRSHLDOSSW1004 | Delivery for UPVC pipes Zone 5 - SHL-DOS(Completed) | 2026-01-22 A | 2026-02-20 → 2026-08-03 A (+164d) | 0% → 100% |  |
| RHD4PRSHLDOSSW1304 | Delivery for Precast Concrete Zone 5 - SHL-DOS | 2026-01-27 → 2026-11-03 (+280d) | 2026-02-01 → 2026-11-08 (+280d) |  |  |
| RHD4PRSHLDOSSW1404 | Delivery for Metal Works (Stairs - Manhole Covers) Zone 5 - SHL-DOS | 2026-01-30 → 2026-11-03 (+277d) | 2026-02-04 → 2026-11-08 (+277d) |  |  |
| RHD4PRSHLDOSSW1504 | Delivery for HDPE pipes Zone 5 - SHL-DOS | 2026-02-04 → 2026-11-03 (+272d) | 2026-02-09 → 2026-11-08 (+272d) |  |  |
| RHD4PRSHLDOSSW1204 | Delivery for Valves Zone 5 - SHL-DOS | 2026-02-21 → 2026-11-09 (+261d) | 2026-02-26 → 2026-11-14 (+261d) |  |  |
| 5 | **RHD4-02-002-SHL-Material Delivery on Site - DOS -Sewage Network - SW - Zone 6** |  | 2026-02-26 → 2026-11-14 (+261d) |  |  |
| RHD4PRSHLDOSSW1005 | Delivery for UPVC pipes Zone 6 - SHL-DOS(Completed) | 2026-01-22 A | 2026-02-20 → 2026-08-03 A (+164d) | 0% → 100% |  |
| RHD4PRSHLDOSSW1305 | Delivery for Precast Concrete Zone 6 - SHL-DOS | 2026-01-27 → 2026-11-03 (+280d) | 2026-02-01 → 2026-11-08 (+280d) |  |  |
| RHD4PRSHLDOSSW1405 | Delivery for Metal Works (Stairs - Manhole Covers) Zone 6 - SHL-DOS | 2026-02-21 → 2026-11-09 (+261d) | 2026-02-26 → 2026-11-14 (+261d) |  |  |
| 8 | **RHD4-02-002-SHL-Material Delivery on Site - DOS -Sewage Network - SW - Zone 7** | 2026-01-21 → 2026-02-16 (+26d) | 2026-05-18 → 2026-11-14 (+180d) |  |  |
| RHD4PRSHLDOSSW1106 | Delivery for GRP pipes Zone 7 - SHL-DOS(Completed) | 2026-04-19 → 2026-02-16 A (-62d) | 2026-05-18 → 2026-08-03 A (+77d) | 0% → 100% |  |
| RHD4PRSHLDOSSW1006 | Delivery for UPVC pipes Zone 7 - SHL-DOS(Completed) | 2026-04-19 A | 2026-05-18 → 2026-08-03 A (+77d) | 0% → 100% |  |
| RHD4PRSHLDOSSW1206 | Delivery for Valves Zone 7 - SHL-DOS | 2026-01-21 → 2026-11-03 (+286d) | 2026-01-26 → 2026-11-08 (+286d) |  |  |
| RHD4PRSHLDOSSW1506 | Delivery for HDPE pipes Zone 7 - SHL-DOS | 2026-02-04 → 2026-11-03 (+272d) | 2026-02-09 → 2026-11-08 (+272d) |  |  |
| RHD4PRSHLDOSSW1306 | Delivery for Precast Concrete Zone 7 - SHL-DOS | 2026-02-02 → 2026-11-09 (+280d) | 2026-02-07 → 2026-11-14 (+280d) |  |  |
| RHD4PRSHLDOSSW1406 | Delivery for Metal Works (Stairs - Manhole Covers) Zone 7 - SHL-DOS | 2026-02-05 → 2026-11-09 (+277d) | 2026-02-10 → 2026-11-14 (+277d) |  |  |
| 6 | **RHD4-02-002-SHL-Material Delivery on Site - DOS -Sewage Network - SW - Zone 8** |  | 2026-02-26 → 2026-11-14 (+261d) |  |  |
| RHD4PRSHLDOSSW1107 | Delivery for GRP pipes Zone 8 - SHL-DOS | 2026-01-14 A | 2026-01-28 → 2026-03-02 A (+33d) | 0% → 100% |  |
| RHD4PRSHLDOSSW1307 | Delivery for Precast Concrete Zone 8 - SHL-DOS | 2026-01-27 → 2026-11-03 (+280d) | 2026-02-01 → 2026-11-08 (+280d) |  |  |
| RHD4PRSHLDOSSW1407 | Delivery for Metal Works (Stairs - Manhole Covers) Zone 8 - SHL-DOS | 2026-01-30 → 2026-11-03 (+277d) | 2026-02-04 → 2026-11-08 (+277d) |  |  |
| RHD4PRSHLDOSSW1007 | Delivery for UPVC pipes Zone 8 - SHL-DOS | 2026-02-21 → 2026-11-09 (+261d) | 2026-02-26 → 2026-11-14 (+261d) |  |  |
| 9 | **RHD4-02-002-SHL-Material Delivery on Site - DOS -Sewage Network - SW - Zone 9** | 2026-01-14 → 2026-02-16 (+33d) | 2026-02-28 → 2026-11-14 (+259d) |  |  |
| RHD4PRSHLDOSSW1108 | Delivery for GRP pipes Zone 9 - SHL-DOS(Completed) | 2026-01-14 → 2026-02-16 A (+33d) | 2026-02-22 → 2026-08-03 A (+162d) | 0% → 100% |  |
| RHD4PRSHLDOSSW1308 | Delivery for Precast Concrete Zone 9 - SHL-DOS | 2026-01-27 → 2026-11-03 (+280d) | 2026-02-01 → 2026-11-08 (+280d) |  |  |
| RHD4PRSHLDOSSW1408 | Delivery for Metal Works (Stairs - Manhole Covers) Zone 9 - SHL-DOS | 2026-01-30 → 2026-11-03 (+277d) | 2026-02-04 → 2026-11-08 (+277d) |  |  |
| RHD4PRSHLDOSSW1008 | Delivery for UPVC pipes Zone 9 - SHL-DOS | 2026-02-23 → 2026-11-09 (+259d) | 2026-02-28 → 2026-11-14 (+259d) |  |  |
| 116 | **RHD4-02-002-SHL-Material Delivery on Site - DOS -Potable Water Network - PT** | 2026-01-13 → 2026-09-01 (+231d) | 2026-06-05 → 2027-01-05 (+214d) |  |  |
| 1 | **RHD4-02-002-SHL-Material Delivery on Site - DOS -Potable Water Network - PT - Crossings** | 2026-01-13 → 2026-11-03 (+294d) | 2026-02-10 → 2026-11-29 (+292d) |  |  |
| RHD4PRSHLDOSPTCr1000 | Delivery for HDPE pipes - PTCr - SHL-DOS | 2026-01-23 → 2026-11-03 (+284d) | 2026-01-28 → 2026-11-08 (+284d) |  |  |
| RHD4PRSHLDOSPTCr1100 | Delivery for Precast Concrete - PTCr - SHL-DOS | 2026-01-13 → 2026-11-03 (+294d) | 2026-01-18 → 2026-11-08 (+294d) |  |  |
| RHD4PRSHLDOSPTCr1200 | Delivery for Valves - PTCr - SHL-DOS | 2026-01-30 → 2026-11-03 (+277d) | 2026-02-04 → 2026-11-08 (+277d) |  |  |
| RHD4PRSHLDOSPTCr1500 | Delivery for Fire Hydrants - PTCr - SHL-DOS | 2026-02-05 → 2026-11-09 (+277d) | 2026-02-10 → 2026-11-14 (+277d) |  |  |
| RHD4PRSHLDOSPTCr1400 | Delivery for Metal Works (Chamber's Covers) - PTCr - SHL-DOS | 2026-01-13 → 2026-11-10 (+301d) | 2026-01-18 → 2026-11-15 (+301d) |  |  |
| RHD4PRSHLDOSPTCr1300 | Delivery for Stem and Surface box - PTCr - SHL-DOS | 2026-01-29 → 2026-11-24 (+299d) | 2026-02-03 → 2026-11-29 (+299d) |  |  |
| 2 | **RHD4-02-002-SHL-Material Delivery on Site - DOS -Potable Water Network - PT - Network** | 2026-01-30 → 2026-09-01 (+214d) | 2026-06-05 → 2027-01-05 (+214d) |  |  |
| RHD4PRSHLDOSPT1000 | Delivery for HDPE pipes - PT - SHL-DOS | 2026-05-19 → 2026-09-01 A (+105d) | 2026-05-24 → 2026-09-06 A (+105d) | 0% → 100% | RHD4PRSHLSTAGST1007, RHD4PRSHLPOPT1000, RHD4PRSHLDOSSW1106, RHD4CZ6C062ST4700, RHD4PRLOLSTACCTV1001 → RHD4PRSHLSTAGST1007, RHD4PRSHLPOPT1000, RHD4PRSHLDOSSW1106, RHD4CZ6C062ST4700 |
| RHD4PRSHLDOSPT1200 | Delivery for Valves - PT - SHL-DOS | 2026-01-30 → 2026-11-03 (+277d) | 2026-02-04 → 2026-11-08 (+277d) |  |  |
| RHD4PRSHLDOSPT1400 | Delivery for Metal Works (Chamber's Covers) - PT - SHL-DOS | 2026-02-05 → 2026-11-10 (+278d) | 2026-02-10 → 2026-11-15 (+278d) |  |  |
| RHD4PRSHLDOSPT1500 | Delivery for Fire Hydrants - PT - SHL-DOS | 2026-02-05 → 2026-11-17 (+285d) | 2026-02-10 → 2026-11-22 (+285d) |  |  |
| RHD4PRSHLDOSPT1100 | Delivery for Precast Concrete - PT - SHL-DOS | 2026-05-25 → 2026-12-25 (+214d) | 2026-05-30 → 2026-12-30 (+214d) |  |  |
| RHD4PRSHLDOSPT1300 | Delivery for Stem and Surface box - PT - SHL-DOS | 2026-05-31 → 2026-12-31 (+214d) | 2026-06-05 → 2027-01-05 (+214d) |  |  |
| 117 | **RHD4-02-002-SHL-Material Delivery on Site - DOS -Irrigation Network - IRR** | 2026-01-25 → 2026-11-03 (+282d) | 2026-06-11 → 2027-01-11 (+214d) |  |  |
| 1 | **RHD4-02-002-SHL-Material Delivery on Site - DOS -Irrigation Network - IRR - Crossings** | 2026-01-25 → 2026-11-03 (+282d) | 2026-02-19 → 2026-12-05 (+289d) |  |  |
| RHD4PRSHLDOSIRRC1000 | Delivery for HDPE pipes - IRRC - SHL-DOS | 2026-01-25 → 2026-11-03 (+282d) | 2026-01-30 → 2026-11-08 (+282d) |  |  |
| RHD4PRSHLDOSIRRC1100 | Delivery for Valves - IRRC - SHL-DOS | 2026-02-02 → 2026-11-03 (+274d) | 2026-02-07 → 2026-11-08 (+274d) |  |  |
| RHD4PRSHLDOSIRRC1200 | Delivery for Precast Concrete - IRRC - SHL-DOS | 2026-01-31 → 2026-11-09 (+282d) | 2026-02-05 → 2026-11-14 (+282d) |  |  |
| RHD4PRSHLDOSIRRC1300 | Delivery for Stem and Surface box - IRRC - SHL-DOS | 2026-02-08 → 2026-11-24 (+289d) | 2026-02-13 → 2026-11-29 (+289d) |  |  |
| RHD4PRSHLDOSIRRC1400 | Delivery for Metal Works (Chamber's Covers) - IRRC - SHL-DOS | 2026-02-14 → 2026-11-30 (+289d) | 2026-02-19 → 2026-12-05 (+289d) |  |  |
| 2 | **RHD4-02-002-SHL-Material Delivery on Site - DOS -Irrigation Network - IRR - Network** | 2026-01-25 → 2026-11-03 (+282d) | 2026-06-11 → 2027-01-11 (+214d) |  |  |
| RHD4PRSHLDOSIRR1000 | Delivery for HDPE pipes - IRR - SHL-DOS | 2026-01-25 → 2026-11-03 (+282d) | 2026-01-30 → 2026-11-08 (+282d) |  |  |
| RHD4PRSHLDOSIRR1100 | Delivery for Valves - IRR - SHL-DOS | 2026-02-02 → 2026-11-03 (+274d) | 2026-02-07 → 2026-11-08 (+274d) |  |  |
| RHD4PRSHLDOSIRR1200 | Delivery for Precast Concrete - IRR - SHL-DOS | 2026-01-31 → 2026-11-09 (+282d) | 2026-02-05 → 2026-11-14 (+282d) |  |  |
| RHD4PRSHLDOSIRR1300 | Delivery for Stem and Surface box - IRR - SHL-DOS | 2026-06-06 → 2027-01-06 (+214d) | 2026-06-11 → 2027-01-11 (+214d) |  |  |
| RHD4PRSHLDOSIRR1400 | Delivery for Metal Works (Chamber's Covers) - IRR - SHL-DOS | 2026-06-06 → 2027-01-06 (+214d) | 2026-06-11 → 2027-01-11 (+214d) |  |  |
| 118 | **RHD4-02-002-SHL-Material Delivery on Site - DOS -Medium Voltage - MV** | 2026-01-20 → 2026-11-03 (+287d) | 2026-01-26 → 2026-12-06 (+314d) |  |  |
| RHD4PRSHLDOSMV1000 | Delivery for UPVC Pipes for Duct Banks - SHL-DOS | 2026-01-20 → 2026-11-03 (+287d) | 2026-01-25 → 2026-11-08 (+287d) |  |  |
| RHD4PRSHLDOSMV1100 | Delivery for Medium Voltage Cable 3Cx500 mm2 - SHL-DOS | 2026-01-21 → 2026-12-01 (+314d) | 2026-01-26 → 2026-12-06 (+314d) |  |  |
| RHD4PRSHLDOSMV1200 | Delivery for Medium Voltage Cable 3Cx50 mm2 - SHL-DOS | 2026-01-21 → 2026-12-01 (+314d) | 2026-01-26 → 2026-12-06 (+314d) |  |  |
| RHD4PRSHLDOSMV1300 | Delivery for Straight Joints 3Cx50 mm2 - SHL-DOS | 2026-01-21 → 2026-12-01 (+314d) | 2026-01-26 → 2026-12-06 (+314d) |  |  |
| RHD4PRSHLDOSMV1400 | Delivery for Normally Open Points (Outdoor type) - SHL-DOS | 2026-01-21 → 2026-12-01 (+314d) | 2026-01-26 → 2026-12-06 (+314d) |  |  |
| 119 | **RHD4-02-002-SHL-Material Delivery on Site - DOS -Low Voltage - LV** | 2026-01-13 → 2026-11-03 (+294d) | 2026-06-17 → 2027-01-17 (+214d) |  |  |
| RHD4PRSHLDOSLV1000 | Delivery for UPVC Pipes for Duct Banks - SHL-DOS | 2026-01-21 → 2026-11-03 (+286d) | 2026-01-26 → 2026-11-08 (+286d) |  |  |
| RHD4PRSHLDOSLV1100 | Delivery for Low voltage Cables - SHL-DOS | 2026-01-13 → 2026-11-03 (+294d) | 2026-01-18 → 2026-11-08 (+294d) |  |  |
| RHD4PRSHLDOSLV1200 | Delivery for Distribution Pillars - SHL-DOS | 2026-01-20 → 2026-11-24 (+308d) | 2026-01-25 → 2026-11-29 (+308d) |  |  |
| RHD4PRSHLDOSLV1300 | Delivery for KWH Meter mounting Frame - SHL-DOS | 2026-01-20 → 2026-11-24 (+308d) | 2026-01-25 → 2026-11-29 (+308d) |  |  |
| RHD4PRSHLDOSLV1500 | Delivery for Earthing for Pillars and Panels - SHL-DOS | 2026-01-20 → 2026-11-24 (+308d) | 2026-01-25 → 2026-11-29 (+308d) |  |  |
| RHD4PRSHLDOSLV1400 | Delivery for Low Voltage Drawpit - SHL-DOS | 2026-06-12 → 2027-01-12 (+214d) | 2026-06-17 → 2027-01-17 (+214d) |  |  |

| ID | Task | Start | Finish | Complete | Predecessors |
| --- | --- | --- | --- | --- | --- |
| 120 | **RHD4-02-002-SHL-Material Delivery on Site - DOS -Street Lighting Network -SL** | 2026-06-18 → 2026-09-08 (+82d) | 2026-07-17 → 2027-01-23 (+190d) |  |  |
| RHD4PRSHLDOSSL1000 | Delivery for UPVC Pipes for Duct Banks - SHL-DOS | 2026-07-12 → 2026-09-08 A (+58d) | 2026-07-17 → 2026-09-13 A (+58d) | 0% → 100% |  |
| RHD4PRSHLDOSSL1400 | Delivery for Street Lighting Drawpit - SHL-DOS | 2026-06-18 → 2026-10-01 A (+105d) | 2026-06-23 → 2026-10-06 A (+105d) | 0% → 100% | RHD4ENMSSL2000, RHD4PRSHLDOSLV1400, RHD4PRSHLDOSLV1400 FF, RHD4PRLOLSTAGLFS1300, RHD4PRSHLPOSL1400 → RHD4ENMSSL2000, RHD4PRSHLDOSLV1400, RHD4PRSHLDOSLV1400 FF, RHD4PRSHLPOSL1400 |
| RHD4PRSHLDOSSL1200 | Delivery for Lighting Poles - SHL-DOS | 2026-06-24 → 2026-10-13 A (+111d) | 2026-06-29 → 2026-10-18 A (+111d) | 0% → 100% | RHD4PRSHLDOSLV1100 SS, RHD4PRSHLDOSSL1400, RHD4CZ6A015ST7300, RHD4PRLOLSTAGLFS1600, RHD4CZ4C012RW2000, RHD4PRSHLPOSL1200 → RHD4PRSHLDOSLV1100 SS, RHD4PRSHLDOSSL1400, RHD4CZ6A015ST7300, RHD4CZ4C012RW2000, RHD4PRSHLPOSL1200 |
| RHD4PRSHLDOSSL1300 | Delivery for Street Lighting Luminaire - SHL-DOS | 2026-07-06 → 2026-10-21 A (+107d) | 2026-07-11 → 2026-10-26 A (+107d) | 0% → 100% | RHD4PRSHLDOSSL1100, RHD4PRLOLSTAGLFS1100, RHD4PRLOLSTAGLFS1700, RHD4PRSHLPOSL1300 → RHD4PRSHLDOSSL1100, RHD4PRSHLPOSL1300 |
| RHD4PRSHLDOSSL1100 | Delivery for Street Lighting Cables - SHL-DOS | 2026-06-30 → 2027-01-18 (+202d) | 2026-07-05 → 2027-01-23 (+202d) |  |  |
| 122 | **RHD4-02-002-SHL-Material Delivery on Site - DOS -Telecommunications Network - TC** | 2026-07-18 → 2026-09-01 (+45d) | 2026-08-04 → 2026-09-06 (+33d) |  |  |
| RHD4PRSHLDOSTC1000 | Delivery for HDPE Ducts - SHL-DOS | 2026-07-24 → 2026-09-01 A (+39d) | 2026-07-29 → 2026-09-06 A (+39d) | 0% → 100% |  |
| RHD4PRSHLDOSTC1100 | Delivery for HDPE Road Crossings Ducts - SHL-DOS | 2026-07-18 → 2026-09-01 A (+45d) | 2026-07-23 → 2026-09-06 A (+45d) | 0% → 100% |  |
| RHD4PRSHLDOSTC1200 | Delivery for Telecommunications Manhole - SHL-DOS | 2026-07-30 → 2026-09-01 A (+33d) | 2026-08-04 → 2026-09-06 A (+33d) | 0% → 100% |  |
| 123 | **RHD4-02-002-SHL-Material Delivery on Site - DOS -Information and Communication Technologies - ICT** | 2026-02-18 → 2026-11-03 (+258d) | 2026-08-16 → 2027-02-19 (+187d) |  |  |
| RHD4PRSHLDOSICT1200 | Delivery for Telecommunications Manhole - SHL-DOS | 2026-02-18 → 2026-11-03 (+258d) | 2026-02-23 → 2026-11-08 (+258d) |  |  |
| RHD4PRSHLDOSICT1100 | Delivery for HDPE Road Crossings Ducts - SHL-DOS | 2026-08-05 → 2027-02-08 (+187d) | 2026-08-10 → 2027-02-13 (+187d) |  |  |
| RHD4PRSHLDOSICT1000 | Delivery for HDPE Ducts - SHL-DOS | 2026-08-11 → 2027-02-14 (+187d) | 2026-08-16 → 2027-02-19 (+187d) |  |  |
| 124 | **RHD4-02-002-SHL-Material Delivery on Site - DOS -Security Network - CCTV** | 2026-02-05 → 2026-11-17 (+285d) | 2026-03-06 → 2026-12-13 (+282d) |  |  |
| RHD4PRSHLDOSCCTV1000 | Delivery for CCTV Network Poles - SHL-DOS | 2026-02-05 → 2026-11-17 (+285d) | 2026-02-10 → 2026-11-22 (+285d) |  |  |
| RHD4PRSHLDOSCCTV1200 | Delivery for CCTV Panels and Panel's Components - SHL-DOS | 2026-02-12 → 2026-11-24 (+285d) | 2026-02-17 → 2026-11-29 (+285d) |  |  |
| RHD4PRSHLDOSCCTV1300 | Delivery for CCTV Fiber Optic Cables - SHL-DOS | 2026-02-19 → 2026-12-01 (+285d) | 2026-02-24 → 2026-12-06 (+285d) |  |  |
| RHD4PRSHLDOSCCTV1100 | Delivery for CCTV Network Cameras - SHL-DOS | 2026-03-01 → 2026-12-08 (+282d) | 2026-03-06 → 2026-12-13 (+282d) |  |  |
| 125 | **RHD4-02-002-SHL-Material Delivery on Site - DOS -Road Works - RD** | 2026-01-06 → 2026-11-03 (+301d) | 2026-02-23 → 2026-12-06 (+286d) |  |  |
| RHD4PRSHLDOSRD1000 | Delivery for Aggregate Base Courses - SHL-DOS | 2026-01-06 → 2026-11-03 (+301d) | 2026-01-11 → 2026-11-08 (+301d) |  |  |
| RHD4PRSHLDOSRD1100 | Delivery for Bituminous Asphalt Layers - SHL-DOS | 2026-01-13 → 2026-11-03 (+294d) | 2026-01-18 → 2026-11-08 (+294d) |  |  |
| RHD4PRSHLDOSRD1200 | Delivery for Precast Concrete Curbstone - SHL-DOS | 2026-01-20 → 2026-11-03 (+287d) | 2026-01-25 → 2026-11-08 (+287d) |  |  |
| RHD4PRSHLDOSRD1600 | Delivery for Traffic Signage - SHL-DOS | 2026-01-27 → 2026-11-10 (+287d) | 2026-02-01 → 2026-11-15 (+287d) |  |  |
| RHD4PRSHLDOSRD1300 | Delivery for Interlock Precast Concrete Unit Paving - SHL-DOS | 2026-02-04 → 2026-11-17 (+286d) | 2026-02-09 → 2026-11-22 (+286d) |  |  |
| RHD4PRSHLDOSRD1400 | Delivery for Wheel Stopper - SHL-DOS | 2026-02-11 → 2026-11-24 (+286d) | 2026-02-16 → 2026-11-29 (+286d) |  |  |
| RHD4PRSHLDOSRD1500 | Delivery for Pavement Marking - SHL-DOS | 2026-02-18 → 2026-12-01 (+286d) | 2026-02-23 → 2026-12-06 (+286d) |  |  |
| 126 | **RHD4-02-002-SHL-Material Delivery on Site - DOS -Lift Stations - LFS** | 2025-12-30 → 2026-11-03 (+308d) | 2026-02-08 → 2026-12-06 (+301d) |  |  |
| RHD4PRSHLDOSLFS1700 | Delivery for Ductile Iron Pipes & Fittings - SHL-DOS | 2026-01-06 → 2026-11-03 (+301d) | 2026-01-11 → 2026-11-08 (+301d) |  |  |
| RHD4PRSHLDOSLFS1800 | Delivery for Sewage Lift Station Valves - SHL-DOS | 2026-01-13 → 2026-11-03 (+294d) | 2026-01-18 → 2026-11-08 (+294d) |  |  |
| RHD4PRSHLDOSLFS1900 | Delivery for Basket screen - SHL-DOS | 2026-01-28 → 2026-11-03 (+279d) | 2026-02-02 → 2026-11-08 (+279d) |  |  |
| RHD4PRSHLDOSLFS2600 | Delivery for Low Voltage Cables - SHL-DOS | 2026-01-20 → 2026-11-03 (+287d) | 2026-01-25 → 2026-11-08 (+287d) |  |  |
| RHD4PRSHLDOSLFS2700 | Delivery for Lighting Fixtures - SHL-DOS | 2026-02-03 → 2026-11-03 (+273d) | 2026-02-08 → 2026-11-08 (+273d) |  |  |
| RHD4PRSHLDOSLFS1100 | Delivery for Roof Waterproofing System - SHL-DOS | 2026-01-07 → 2026-11-10 (+307d) | 2026-01-12 → 2026-11-15 (+307d) |  |  |
| RHD4PRSHLDOSLFS1200 | Delivery for Bituminous Sheet Waterproofing - SHL-DOS | 2026-01-15 → 2026-11-10 (+299d) | 2026-01-20 → 2026-11-15 (+299d) |  |  |
| RHD4PRSHLDOSLFS1600 | Delivery for Epoxy Coating - SHL-DOS | 2026-01-25 → 2026-11-10 (+289d) | 2026-01-30 → 2026-11-15 (+289d) |  |  |
| RHD4PRSHLDOSLFS2100 | Delivery for UPVC Pipes for Sanitary Drain - SHL-DOS | 2026-01-06 → 2026-11-10 (+308d) | 2026-01-11 → 2026-11-15 (+308d) |  |  |
| RHD4PRSHLDOSLFS2400 | Delivery for lighting and power panel boards - SHL-DOS | 2026-01-22 → 2026-11-10 (+292d) | 2026-01-27 → 2026-11-15 (+292d) |  |  |
| RHD4PRSHLDOSLFS3000 | Delivery for Fire Alarm System - SHL-DOS | 2025-12-30 → 2026-11-10 (+315d) | 2026-01-04 → 2026-11-15 (+315d) |  |  |
| RHD4PRSHLDOSLFS1300 | Delivery for Fluid-Applied Waterproofing - SHL-DOS | 2026-01-27 → 2026-11-17 (+294d) | 2026-02-01 → 2026-11-22 (+294d) |  |  |
| RHD4PRSHLDOSLFS2300 | Delivery for Motor Control Center (MCC) - SHL-DOS | 2026-01-18 → 2026-11-17 (+303d) | 2026-01-23 → 2026-11-22 (+303d) |  |  |
| RHD4PRSHLDOSLFS2800 | Delivery for Wiring Devices - SHL-DOS | 2026-01-02 → 2026-11-17 (+319d) | 2026-01-07 → 2026-11-22 (+319d) |  |  |
| RHD4PRSHLDOSLFS1000 | Delivery for Metal Ladder and checkered Plate - SHL-DOS | 2026-02-02 → 2026-11-24 (+295d) | 2026-02-07 → 2026-11-29 (+295d) |  |  |
| RHD4PRSHLDOSLFS1400 | Delivery for Metal Doors and Access Doors and Frames - SHL-DOS | 2026-01-02 → 2026-11-24 (+326d) | 2026-01-07 → 2026-11-29 (+326d) |  |  |
| RHD4PRSHLDOSLFS2200 | Delivery for wall mounted Split/AC - SHL-DOS | 2026-01-26 → 2026-11-24 (+302d) | 2026-01-31 → 2026-11-29 (+302d) |  |  |
| RHD4PRSHLDOSLFS2900 | Delivery for Enclosed Switches and Circuit Breakers - SHL-DOS | 2026-01-02 → 2026-11-24 (+326d) | 2026-01-07 → 2026-11-29 (+326d) |  |  |
| RHD4PRSHLDOSLFS1500 | Delivery for Painting - SHL-DOS | 2026-01-11 → 2026-12-01 (+324d) | 2026-01-16 → 2026-12-06 (+324d) |  |  |
| RHD4PRSHLDOSLFS2500 | Delivery for Earthing for Lift Stations - SHL-DOS | 2026-01-09 → 2026-12-01 (+326d) | 2026-01-14 → 2026-12-06 (+326d) |  |  |
| RHD4PRSHLDOSLFS3100 | Delivery for Fences and Gates - SHL-DOS | 2026-01-18 → 2026-12-01 (+317d) | 2026-01-23 → 2026-12-06 (+317d) |  |  |
| 1 | **RHD4-02-002-Short Lead Items - SHL-Staging Time - STAG** | 2026-01-05 → 2026-06-14 (+160d) | 2026-09-03 → 2027-02-25 (+175d) |  |  |
| 114 | **RHD4-02-002-SHL-Staging Time - STAG -Storm Network - ST** | 2026-01-11 → 2026-06-14 (+154d) | 2026-09-03 → 2026-11-29 (+87d) |  |  |
| 1 | **RHD4-02-002-SHL-Staging Time - STAG -Storm Network - ST - Zone 1** | 2026-02-02 → 2026-08-05 (+184d) | 2026-08-28 → 2026-11-21 (+85d) |  |  |
| RHD4PRSHLSTAGST1000 | Staging for GRP pipes Zone 1 - SHL-STAG | 2026-08-17 → 2026-08-05 A (-12d) | 2026-08-22 → 2026-08-10 A (-12d) | 0% → 100% |  |
| RHD4PRSHLSTAGST1100 | Staging for UPVC pipes Zone 1 - SHL-STAG | 2026-02-08 → 2026-09-07 A (+211d) | 2026-02-13 → 2026-09-12 A (+211d) | 0% → 100% |  |
| RHD4PRSHLSTAGST1300 | Staging for Catch basin Zone 1 - SHL-STAG | 2026-08-23 → 2026-09-24 A (+32d) | 2026-08-28 → 2026-09-29 A (+32d) | 0% → 100% |  |
| RHD4PRSHLSTAGST1600 | Staging for Precast Concrete Zone 1 - SHL-STAG | 2026-02-02 → 2026-09-24 A (+234d) | 2026-02-07 → 2026-09-29 A (+234d) | 0% → 100% |  |
| RHD4PRSHLSTAGST1700 | Staging for Metal Works (Stairs - Manhole Covers) Zone 1 - SHL-STAG | 2026-02-07 → 2026-10-11 A (+246d) | 2026-02-12 → 2026-10-16 A (+246d) | 0% → 100% |  |
| RHD4PRSHLSTAGST1400 | Staging for Grouted Riprap Zone 1 - SHL-STAG | 2026-02-14 → 2026-11-16 (+275d) | 2026-02-19 → 2026-11-21 (+275d) |  |  |
| 2 | **RHD4-02-002-SHL-Staging Time - STAG -Storm Network - ST - Zone 2** | 2026-01-11 → 2026-06-14 (+154d) | 2026-08-28 → 2026-11-21 (+85d) |  |  |
| RHD4PRSHLSTAGST1501 | Staging for Tensile reinforcement steel Zone 2 - SHL-STAG | 2026-02-07 → 2026-06-14 A (+127d) | 2026-02-12 → 2026-06-19 A (+127d) | 0% → 100% |  |
| RHD4PRSHLSTAGST1001 | Staging for GRP pipes Zone 2 - SHL-STAG | 2026-08-17 → 2026-08-04 A (-13d) | 2026-08-22 → 2026-08-09 A (-13d) | 0% → 100% |  |
| RHD4PRSHLSTAGST1101 | Staging for UPVC pipes Zone 2 - SHL-STAG | 2026-01-11 → 2026-10-06 A (+268d) | 2026-01-16 → 2026-10-11 A (+268d) | 0% → 100% |  |
| RHD4PRSHLSTAGST1601 | Staging for Precast Concrete Zone 2 - SHL-STAG | 2026-02-02 → 2026-10-07 A (+247d) | 2026-02-07 → 2026-10-12 A (+247d) | 0% → 100% |  |
| RHD4PRSHLSTAGST1301 | Staging for Catch basin Zone 2 - SHL-STAG | 2026-08-23 → 2026-10-13 A (+51d) | 2026-08-28 → 2026-10-18 A (+51d) | 0% → 100% |  |
| RHD4PRSHLSTAGST1701 | Staging for Metal Works (Stairs - Manhole Covers) Zone 2 - SHL-STAG | 2026-02-07 → 2026-11-11 (+277d) | 2026-02-12 → 2026-11-16 (+277d) |  |  |
| RHD4PRSHLSTAGST1401 | Staging for Grouted Riprap Zone 2 - SHL-STAG | 2026-02-14 → 2026-11-16 (+275d) | 2026-02-19 → 2026-11-21 (+275d) |  |  |
| 3 | **RHD4-02-002-SHL-Staging Time - STAG -Storm Network - ST - Zone 3** | 2026-02-02 → 2026-09-09 (+219d) | 2026-07-23 → 2026-11-16 (+116d) |  |  |
| RHD4PRSHLSTAGST1002 | Staging for GRP pipes Zone 3 - SHL-STAG | 2026-06-12 → 2026-09-09 A (+89d) | 2026-06-17 → 2026-09-14 A (+89d) | 0% → 100% |  |
| RHD4PRSHLSTAGST1602 | Staging for Precast Concrete Zone 3 - SHL-STAG | 2026-02-02 → 2026-09-09 A (+219d) | 2026-02-07 → 2026-09-14 A (+219d) | 0% → 100% |  |
| RHD4PRSHLSTAGST1102 | Staging for UPVC pipes Zone 3 - SHL-STAG | 2026-02-08 → 2026-09-15 A (+219d) | 2026-02-13 → 2026-09-20 A (+219d) | 0% → 100% |  |

| ID | Task | Start | Finish | Complete |
| --- | --- | --- | --- | --- |
| RHD4PRSHLSTAGST1302 | Staging for Catch basin Zone 3 - SHL-STAG | 2026-07-18 → 2026-09-19 A (+63d) | 2026-07-23 → 2026-09-24 A (+63d) | 0% → 100% |
| RHD4PRSHLSTAGST1702 | Staging for Metal Works (Stairs - Manhole Covers) Zone 3 - SHL-STAG | 2026-02-07 → 2026-11-11 (+277d) | 2026-02-12 → 2026-11-16 (+277d) |  |
| 4 | **RHD4-02-002-SHL-Staging Time - STAG -Storm Network - ST - Zone 4** | 2026-01-26 → 2026-08-08 (+194d) | 2026-07-17 → 2026-11-16 (+122d) |  |
| RHD4PRSHLSTAGST1003 | Staging for GRP pipes Zone 4 - SHL-STAG | 2026-07-12 → 2026-08-08 A (+27d) | 2026-07-17 → 2026-09-17 A (+62d) | 0% → 100% |
| RHD4PRSHLSTAGST1103 | Staging for UPVC pipes Zone 4 - SHL-STAG | 2026-02-08 → 2026-09-09 A (+213d) | 2026-02-13 → 2026-09-14 A (+213d) | 0% → 100% |
| RHD4PRSHLSTAGST1303 | Staging for Catch basin Zone 4 - SHL-STAG | 2026-01-26 → 2026-09-09 A (+226d) | 2026-01-31 → 2026-09-14 A (+226d) | 0% → 100% |
| RHD4PRSHLSTAGST1603 | Staging for Precast Concrete Zone 4 - SHL-STAG | 2026-02-02 → 2026-09-09 A (+219d) | 2026-02-07 → 2026-09-14 A (+219d) | 0% → 100% |
| RHD4PRSHLSTAGST1703 | Staging for Metal Works (Stairs - Manhole Covers) Zone 4 - SHL-STAG | 2026-02-07 → 2026-11-11 (+277d) | 2026-02-12 → 2026-11-16 (+277d) |  |
| 5 | **RHD4-02-002-SHL-Staging Time - STAG -Storm Network - ST - Zone 5** | 2026-01-11 → 2026-06-17 (+157d) | 2026-03-25 → 2026-11-16 (+236d) |  |
| RHD4PRSHLSTAGST1604 | Staging for Precast Concrete Zone 5 - SHL-STAG | 2026-02-02 → 2026-06-17 A (+135d) | 2026-02-08 → 2026-06-24 A (+136d) | 0% → 100% |
| RHD4PRSHLSTAGST1504 | Staging for Tensile reinforcement steel Zone 5 - SHL-STAG | 2026-02-13 → 2026-06-21 A (+128d) | 2026-02-18 → 2026-06-26 A (+128d) | 0% → 100% |
| RHD4PRSHLSTAGST1004 | Staging for GRP pipes Zone 5 - SHL-STAG | 2026-03-14 → 2026-08-04 A (+143d) | 2026-03-19 → 2026-08-09 A (+143d) | 0% → 100% |
| RHD4PRSHLSTAGST1104 | Staging for UPVC pipes Zone 5 - SHL-STAG | 2026-01-11 → 2026-08-09 A (+210d) | 2026-01-16 → 2026-08-14 A (+210d) | 0% → 100% |
| RHD4PRSHLSTAGST1204 | Staging for HDPE pipes Zone 5 - SHL-STAG | 2026-03-20 → 2026-08-15 A (+148d) | 2026-03-25 → 2026-08-20 A (+148d) | 0% → 100% |
| RHD4PRSHLSTAGST1304 | Staging for Catch basin Zone 5 - SHL-STAG | 2026-03-20 → 2026-08-19 A (+152d) | 2026-03-25 → 2026-08-24 A (+152d) | 0% → 100% |
| RHD4PRSHLSTAGST1704 | Staging for Metal Works (Stairs - Manhole Covers) Zone 5 - SHL-STAG | 2026-02-07 → 2026-11-11 (+277d) | 2026-02-12 → 2026-11-16 (+277d) |  |
| 6 | **RHD4-02-002-SHL-Staging Time - STAG -Storm Network - ST - Zone 6** | 2026-01-11 → 2026-08-08 (+209d) | 2026-02-17 → 2026-11-29 (+285d) |  |
| RHD4PRSHLSTAGST1005 | Staging for GRP pipes Zone 6 - SHL-STAG | 2026-02-12 → 2026-08-08 A (+177d) | 2026-02-17 → 2026-11-29 A (+285d) | 0% → 100% |
| RHD4PRSHLSTAGST1105 | Staging for UPVC pipes Zone 6 - SHL-STAG | 2026-01-11 → 2026-09-09 A (+241d) | 2026-01-16 → 2026-09-14 A (+241d) | 0% → 100% |
| RHD4PRSHLSTAGST1305 | Staging for Catch basin Zone 6 - SHL-STAG | 2026-01-26 → 2026-09-09 A (+226d) | 2026-01-31 → 2026-09-14 A (+226d) | 0% → 100% |
| RHD4PRSHLSTAGST1605 | Staging for Precast Concrete Zone 6 - SHL-STAG | 2026-02-02 → 2026-09-09 A (+219d) | 2026-02-07 → 2026-09-14 A (+219d) | 0% → 100% |
| RHD4PRSHLSTAGST1705 | Staging for Metal Works (Stairs - Manhole Covers) Zone 6 - SHL-STAG | 2026-02-07 → 2026-11-11 (+277d) | 2026-02-12 → 2026-11-16 (+277d) |  |
| 8 | **RHD4-02-002-SHL-Staging Time - STAG -Storm Network - ST - Zone 7** | 2026-02-02 → 2026-08-04 (+183d) | 2026-04-24 → 2026-11-22 (+212d) |  |
| RHD4PRSHLSTAGST1006 | Staging for GRP pipes Zone 7 - SHL-STAG | 2026-04-13 → 2026-08-04 A (+113d) | 2026-04-18 → 2026-08-09 A (+113d) | 0% → 100% |
| RHD4PRSHLSTAGST1106 | Staging for UPVC pipes Zone 7 - SHL-STAG | 2026-02-08 → 2026-09-09 A (+213d) | 2026-02-13 → 2026-09-14 A (+213d) | 0% → 100% |
| RHD4PRSHLSTAGST1306 | Staging for Catch basin Zone 7 - SHL-STAG | 2026-02-08 → 2026-09-09 A (+213d) | 2026-02-13 → 2026-09-14 A (+213d) | 0% → 100% |
| RHD4PRSHLSTAGST1606 | Staging for Precast Concrete Zone 7 - SHL-STAG | 2026-02-02 → 2026-09-09 A (+219d) | 2026-02-07 → 2026-09-14 A (+219d) | 0% → 100% |
| RHD4PRSHLSTAGST1206 | Staging for HDPE pipes Zone 7 - SHL-STAG | 2026-04-19 → 2026-09-24 A (+158d) | 2026-04-24 → 2026-09-29 A (+158d) | 0% → 100% |
| RHD4PRSHLSTAGST1706 | Staging for Metal Works (Stairs - Manhole Covers) Zone 7 - SHL-STAG | 2026-02-13 → 2026-11-17 (+277d) | 2026-02-18 → 2026-11-22 (+277d) |  |
| 7 | **RHD4-02-002-SHL-Staging Time - STAG -Storm Network - ST - Zone 8** | 2026-02-02 → 2026-08-04 (+183d) | 2026-05-24 → 2026-11-22 (+182d) |  |
| RHD4PRSHLSTAGST1007 | Staging for GRP pipes Zone 8 - SHL-STAG | 2026-05-13 → 2026-08-04 A (+83d) | 2026-05-18 → 2026-08-09 A (+83d) | 0% → 100% |
| RHD4PRSHLSTAGST1107 | Staging for UPVC pipes Zone 8 - SHL-STAG | 2026-02-08 → 2026-08-25 A (+198d) | 2026-02-13 → 2026-08-30 A (+198d) | 0% → 100% |
| RHD4PRSHLSTAGST1307 | Staging for Catch basin Zone 8 - SHL-STAG | 2026-05-19 → 2026-08-25 A (+98d) | 2026-05-24 → 2026-08-30 A (+98d) | 0% → 100% |
| RHD4PRSHLSTAGST1607 | Staging for Precast Concrete Zone 8 - SHL-STAG | 2026-02-02 → 2026-08-25 A (+204d) | 2026-02-07 → 2026-08-30 A (+204d) | 0% → 100% |
| RHD4PRSHLSTAGST1707 | Staging for Metal Works (Stairs - Manhole Covers) Zone 8 - SHL-STAG | 2026-02-13 → 2026-11-17 (+277d) | 2026-02-18 → 2026-11-22 (+277d) |  |
| 9 | **RHD4-02-002-SHL-Staging Time - STAG -Storm Network - ST - Zone 9** | 2026-02-07 → 2026-08-24 (+198d) | 2026-09-03 → 2026-11-16 (+74d) |  |
| RHD4PRSHLSTAGST1008 | Staging for GRP pipes Zone 9 - SHL-STAG | 2026-06-12 → 2026-08-24 A (+73d) | 2026-06-17 → 2026-08-29 A (+73d) | 0% → 100% |
| RHD4PRSHLSTAGST1108 | Staging for UPVC pipes Zone 9 - SHL-STAG | 2026-02-14 → 2026-08-24 A (+191d) | 2026-02-19 → 2026-08-29 A (+191d) | 0% → 100% |
| RHD4PRSHLSTAGST1308 | Staging for Catch basin Zone 9 - SHL-STAG | 2026-08-29 → 2026-08-24 A (-5d) | 2026-09-03 → 2026-08-29 A (-5d) | 0% → 100% |
| RHD4PRSHLSTAGST1608 | Staging for Precast Concrete Zone 9 - SHL-STAG | 2026-02-08 → 2026-08-24 A (+197d) | 2026-02-13 → 2026-08-29 A (+197d) | 0% → 100% |
| RHD4PRSHLSTAGST1708 | Staging for Metal Works (Stairs - Manhole Covers) Zone 9 - SHL-STAG | 2026-02-07 → 2026-11-11 (+277d) | 2026-02-12 → 2026-11-16 (+277d) |  |
| 115 | **RHD4-02-002-SHL-Staging Time - STAG -Sewage Network - SW** | 2026-01-20 → 2026-08-04 (+196d) | 2026-05-24 → 2026-12-30 (+220d) |  |
| 1 | **RHD4-02-002-SHL-Staging Time - STAG -Sewage Network - SW - Zone 1** | 2026-02-02 → 2026-11-09 (+280d) | 2026-03-02 → 2026-11-25 (+268d) |  |
| RHD4PRSHLSTAGSW1300 | Staging for Precast Concrete Zone 1 - SHL-DOS | 2026-02-02 → 2026-11-09 (+280d) | 2026-02-07 → 2026-11-14 (+280d) |  |
| RHD4PRSHLSTAGSW1000 | Staging for UPVC pipes Zone 1 - SHL-DOS | 2026-02-19 → 2026-11-14 (+268d) | 2026-02-24 → 2026-11-19 (+268d) |  |
| RHD4PRSHLSTAGSW1400 | Staging for Metal Works (Stairs - Manhole Covers) Zone 1 - SHL-DOS | 2026-02-25 → 2026-11-20 (+268d) | 2026-03-02 → 2026-11-25 (+268d) |  |
| 2 | **RHD4-02-002-SHL-Staging Time - STAG -Sewage Network - SW - Zone 2** | 2026-02-02 → 2026-11-09 (+280d) | 2026-02-19 → 2026-11-26 (+280d) |  |
| RHD4PRSHLSTAGSW1301 | Staging for Precast Concrete Zone 2 - SHL-DOS | 2026-02-02 → 2026-11-09 (+280d) | 2026-02-07 → 2026-11-14 (+280d) |  |
| RHD4PRSHLSTAGSW1401 | Staging for Metal Works (Stairs - Manhole Covers) Zone 2 - SHL-DOS | 2026-02-05 → 2026-11-09 (+277d) | 2026-02-10 → 2026-11-14 (+277d) |  |
| RHD4PRSHLSTAGSW1001 | Staging for UPVC pipes Zone 2 - SHL-DOS | 2026-02-14 → 2026-11-21 (+280d) | 2026-02-19 → 2026-11-26 (+280d) |  |
| RHD4PRSHLSTAGSW1101 | Staging for GRP pipes Zone 2 - SHL-DOS | 2026-02-08 → 2026-11-21 (+286d) | 2026-02-13 → 2026-11-26 (+286d) |  |
| 3 | **RHD4-02-002-SHL-Staging Time - STAG -Sewage Network - SW - Zone 3** | 2026-01-20 → 2026-11-09 (+293d) | 2026-02-21 → 2026-11-20 (+272d) |  |
| RHD4PRSHLSTAGSW1102 | Staging for GRP pipes Zone 3 - SHL-DOS | 2026-01-20 → 2026-11-09 (+293d) | 2026-01-25 → 2026-11-14 (+293d) |  |
| RHD4PRSHLSTAGSW1502 | Staging for HDPE pipes Zone 3 - SHL-DOS | 2026-02-10 → 2026-11-09 (+272d) | 2026-02-15 → 2026-11-14 (+272d) |  |
| RHD4PRSHLSTAGSW1202 | Staging for Valves Zone 3 - SHL-DOS | 2026-02-02 → 2026-11-15 (+286d) | 2026-02-07 → 2026-11-20 (+286d) |  |
| RHD4PRSHLSTAGSW1302 | Staging for Precast Concrete Zone 3 - SHL-DOS | 2026-02-16 → 2026-11-15 (+272d) | 2026-02-21 → 2026-11-20 (+272d) |  |
| RHD4PRSHLSTAGSW1402 | Staging for Metal Works (Stairs - Manhole Covers) Zone 3 - SHL-DOS | 2026-02-16 → 2026-11-15 (+272d) | 2026-02-21 → 2026-11-20 (+272d) |  |
| 4 | **RHD4-02-002-SHL-Staging Time - STAG -Sewage Network - SW - Zone 4** | 2026-01-27 → 2026-11-09 (+286d) | 2026-02-27 → 2026-12-07 (+283d) |  |
| RHD4PRSHLSTAGSW1203 | Staging for Valves Zone 4 - SHL-DOS | 2026-01-27 → 2026-11-09 (+286d) | 2026-02-01 → 2026-11-14 (+286d) |  |
| RHD4PRSHLSTAGSW1003 | Staging for UPVC pipes Zone 4 - SHL-DOS | 2026-01-28 → 2026-11-14 (+290d) | 2026-02-02 → 2026-11-19 (+290d) |  |
| RHD4PRSHLSTAGSW1403 | Staging for Metal Works (Stairs - Manhole Covers) Zone 4 - SHL-DOS | 2026-02-05 → 2026-11-20 (+288d) | 2026-02-10 → 2026-11-25 (+288d) |  |
| RHD4PRSHLSTAGSW1303 | Staging for Precast Concrete Zone 4 - SHL-DOS | 2026-02-11 → 2026-11-26 (+288d) | 2026-02-16 → 2026-12-01 (+288d) |  |
| RHD4PRSHLSTAGSW1103 | Staging for GRP pipes Zone 4 - SHL-DOS | 2026-02-22 → 2026-12-02 (+283d) | 2026-02-27 → 2026-12-07 (+283d) |  |
| 7 | **RHD4-02-002-SHL-Staging Time - STAG -Sewage Network - SW - Zone 5** | 2026-02-05 → 2026-11-09 (+277d) | 2026-04-30 → 2026-12-30 (+244d) |  |
| RHD4PRSHLSTAGSW1004 | Staging for UPVC pipes Zone 5 - SHL-DOS | 2026-02-21 → 2026-11-09 (+261d) | 2026-02-26 → 2026-11-14 (+261d) |  |
| RHD4PRSHLSTAGSW1104 | Staging for GRP pipes Zone 5 - SHL-DOS | 2026-02-08 → 2026-11-09 (+274d) | 2026-02-13 → 2026-11-14 (+274d) |  |
| RHD4PRSHLSTAGSW1404 | Staging for Metal Works (Stairs - Manhole Covers) Zone 5 - SHL-DOS | 2026-02-05 → 2026-11-09 (+277d) | 2026-02-10 → 2026-11-14 (+277d) |  |
| RHD4PRSHLSTAGSW1204 | Staging for Valves Zone 5 - SHL-DOS | 2026-02-27 → 2026-11-15 (+261d) | 2026-03-04 → 2026-11-20 (+261d) |  |
| RHD4PRSHLSTAGSW1504 | Staging for HDPE pipes Zone 5 - SHL-DOS | 2026-03-05 → 2026-11-21 (+261d) | 2026-03-10 → 2026-11-26 (+261d) |  |
| RHD4PRSHLSTAGSW1304 | Staging for Precast Concrete Zone 5 - SHL-DOS | 2026-04-25 → 2026-12-25 (+244d) | 2026-04-30 → 2026-12-30 (+244d) |  |

| ID | Task | Start | Finish | Complete |
| --- | --- | --- | --- | --- |
| 5 | **RHD4-02-002-SHL-Staging Time - STAG -Sewage Network - SW - Zone 6** | 2026-02-02 → 2026-11-09 (+280d) | 2026-03-04 → 2026-11-20 (+261d) |  |
| RHD4PRSHLSTAGSW1005 | Staging for UPVC pipes Zone 6 - SHL-DOS | 2026-02-21 → 2026-11-09 (+261d) | 2026-02-26 → 2026-11-14 (+261d) |  |
| RHD4PRSHLSTAGSW1305 | Staging for Precast Concrete Zone 6 - SHL-DOS | 2026-02-02 → 2026-11-09 (+280d) | 2026-02-07 → 2026-11-14 (+280d) |  |
| RHD4PRSHLSTAGSW1405 | Staging for Metal Works (Stairs - Manhole Covers) Zone 6 - SHL-DOS | 2026-02-27 → 2026-11-15 (+261d) | 2026-03-04 → 2026-11-20 (+261d) |  |
| 8 | **RHD4-02-002-SHL-Staging Time - STAG -Sewage Network - SW - Zone 7** | 2026-01-27 → 2026-08-04 (+189d) | 2026-05-24 → 2026-12-30 (+220d) |  |
| RHD4PRSHLSTAGSW1006 | Staging for UPVC pipes Zone 7 - SHL-DOS | 2026-05-19 → 2026-08-04 A (+77d) | 2026-05-24 → 2026-08-09 A (+77d) | 0% → 100% |
| RHD4PRSHLSTAGSW1206 | Staging for Valves Zone 7 - SHL-DOS | 2026-01-27 → 2026-11-09 (+286d) | 2026-02-01 → 2026-11-14 (+286d) |  |
| RHD4PRSHLSTAGSW1506 | Staging for HDPE pipes Zone 7 - SHL-DOS | 2026-02-10 → 2026-11-09 (+272d) | 2026-02-15 → 2026-11-14 (+272d) |  |
| RHD4PRSHLSTAGSW1306 | Staging for Precast Concrete Zone 7 - SHL-DOS | 2026-02-08 → 2026-11-15 (+280d) | 2026-02-13 → 2026-11-20 (+280d) |  |
| RHD4PRSHLSTAGSW1406 | Staging for Metal Works (Stairs - Manhole Covers) Zone 7 - SHL-DOS | 2026-02-11 → 2026-11-15 (+277d) | 2026-02-16 → 2026-11-20 (+277d) |  |
| RHD4PRSHLSTAGSW1106 | Staging for GRP pipes Zone 7 - SHL-DOS | 2026-05-19 → 2026-12-25 (+220d) | 2026-05-24 → 2026-12-30 (+220d) |  |
| 6 | **RHD4-02-002-SHL-Staging Time - STAG -Sewage Network - SW - Zone 8** | 2026-01-29 → 2026-11-03 (+278d) | 2026-03-04 → 2026-11-20 (+261d) |  |
| RHD4PRSHLSTAGSW1107 | Staging for GRP pipes Zone 8 - SHL-DOS | 2026-01-29 → 2026-11-03 (+278d) | 2026-02-03 → 2026-11-08 (+278d) |  |
| RHD4PRSHLSTAGSW1307 | Staging for Precast Concrete Zone 8 - SHL-DOS | 2026-02-04 → 2026-11-09 (+278d) | 2026-02-09 → 2026-11-14 (+278d) |  |
| RHD4PRSHLSTAGSW1407 | Staging for Metal Works (Stairs - Manhole Covers) Zone 8 - SHL-DOS | 2026-02-05 → 2026-11-09 (+277d) | 2026-02-10 → 2026-11-14 (+277d) |  |
| RHD4PRSHLSTAGSW1007 | Staging for UPVC pipes Zone 8 - SHL-DOS | 2026-02-27 → 2026-11-15 (+261d) | 2026-03-04 → 2026-11-20 (+261d) |  |
| 9 | **RHD4-02-002-SHL-Staging Time - STAG -Sewage Network - SW - Zone 9** | 2026-02-02 → 2026-11-09 (+280d) | 2026-03-06 → 2026-12-02 (+271d) |  |
| RHD4PRSHLSTAGSW1308 | Staging for Precast Concrete Zone 9 - SHL-DOS | 2026-02-02 → 2026-11-09 (+280d) | 2026-02-07 → 2026-11-14 (+280d) |  |
| RHD4PRSHLSTAGSW1408 | Staging for Metal Works (Stairs - Manhole Covers) Zone 9 - SHL-DOS | 2026-02-05 → 2026-11-09 (+277d) | 2026-02-10 → 2026-11-14 (+277d) |  |
| RHD4PRSHLSTAGSW1008 | Staging for UPVC pipes Zone 9 - SHL-DOS | 2026-03-01 → 2026-11-15 (+259d) | 2026-03-06 → 2026-11-20 (+259d) |  |
| RHD4PRSHLSTAGSW1108 | Staging for GRP pipes Zone 9 - SHL-DOS | 2026-02-23 → 2026-11-27 (+277d) | 2026-02-28 → 2026-12-02 (+277d) |  |
| 116 | **RHD4-02-002-SHL-Staging Time - STAG -Potable Water Network - PT** | 2026-01-29 → 2026-11-09 (+284d) | 2026-06-11 → 2027-01-11 (+214d) |  |
| 1 | **RHD4-02-002-SHL-Staging Time - STAG -Potable Water Network - PT - Crossings** | 2026-01-29 → 2026-11-09 (+284d) | 2026-02-22 → 2026-12-05 (+286d) |  |
| RHD4PRSHLSTAPTCr1000 | Staging for HDPE pipes - PTCr - SHL-STAG | 2026-01-29 → 2026-11-09 (+284d) | 2026-02-03 → 2026-11-14 (+284d) |  |
| RHD4PRSHLSTAPTCr1200 | Staging for Valves - PTCr - SHL-STAG | 2026-02-05 → 2026-11-09 (+277d) | 2026-02-10 → 2026-11-14 (+277d) |  |
| RHD4PRSHLSTAPTCr1100 | Staging for Precast Concrete - PTCr - SHL-STAG | 2026-02-11 → 2026-11-15 (+277d) | 2026-02-16 → 2026-11-20 (+277d) |  |
| RHD4PRSHLSTAPTCr1500 | Staging for Fire Hydrants - PTCr - SHL-STAG | 2026-02-11 → 2026-11-15 (+277d) | 2026-02-16 → 2026-11-20 (+277d) |  |
| RHD4PRSHLSTAPTCr1400 | Staging for Metal Works (Chamber's Covers) - PTCr - SHL-STAG | 2026-02-17 → 2026-11-21 (+277d) | 2026-02-22 → 2026-11-26 (+277d) |  |
| RHD4PRSHLSTAPTCr1300 | Staging for Stem and Surface box - PTCr - SHL-STAG | 2026-02-17 → 2026-11-30 (+286d) | 2026-02-22 → 2026-12-05 (+286d) |  |
| 2 | **RHD4-02-002-SHL-Staging Time - STAG -Potable Water Network - PT - Network** | 2026-02-05 → 2026-11-09 (+277d) | 2026-06-11 → 2027-01-11 (+214d) |  |
| RHD4PRSHLSTAGPT1200 | Staging for Valves - PT - SHL-STAG | 2026-02-05 → 2026-11-09 (+277d) | 2026-02-10 → 2026-11-14 (+277d) |  |
| RHD4PRSHLSTAGPT1400 | Staging for Metal Works (Chamber's Covers) - PT - SHL-STAG | 2026-02-11 → 2026-11-16 (+278d) | 2026-02-16 → 2026-11-21 (+278d) |  |
| RHD4PRSHLSTAGPT1500 | Staging for Fire Hydrants - PT - SHL-STAG | 2026-02-11 → 2026-11-23 (+285d) | 2026-02-16 → 2026-11-28 (+285d) |  |
| RHD4PRSHLSTAGPT1000 | Staging for HDPE pipes - PT - SHL-STAG | 2026-05-25 → 2026-12-25 (+214d) | 2026-05-30 → 2026-12-30 (+214d) |  |
| RHD4PRSHLSTAGPT1100 | Staging for Precast Concrete - PT - SHL-STAG | 2026-05-31 → 2026-12-31 (+214d) | 2026-06-05 → 2027-01-05 (+214d) |  |
| RHD4PRSHLSTAGPT1300 | Staging for Stem and Surface box - PT - SHL-STAG | 2026-06-06 → 2027-01-06 (+214d) | 2026-06-11 → 2027-01-11 (+214d) |  |
| 117 | **RHD4-02-002-SHL-Staging Time - STAG -Irrigation Network - IRR** | 2026-01-31 → 2026-11-09 (+282d) | 2026-06-17 → 2027-01-17 (+214d) |  |
| 1 | **RHD4-02-002-SHL-Staging Time - STAG -Irrigation Network - IRR - Crossings** | 2026-01-31 → 2026-11-09 (+282d) | 2026-03-03 → 2026-12-11 (+283d) |  |
| RHD4PRSHLSTAIRRC1000 | Staging for HDPE pipes - IRRC - SHL-STAG | 2026-01-31 → 2026-11-09 (+282d) | 2026-02-05 → 2026-11-14 (+282d) |  |
| RHD4PRSHLSTAIRRC1100 | Staging for Valves - IRRC - SHL-STAG | 2026-02-08 → 2026-11-09 (+274d) | 2026-02-13 → 2026-11-14 (+274d) |  |
| RHD4PRSHLSTAIRRC1200 | Staging for Precast Concrete - IRRC - SHL-STAG | 2026-02-14 → 2026-11-15 (+274d) | 2026-02-19 → 2026-11-20 (+274d) |  |
| RHD4PRSHLSTAIRRC1300 | Staging for Stem and Surface box - IRRC - SHL-STAG | 2026-02-20 → 2026-11-30 (+283d) | 2026-02-25 → 2026-12-05 (+283d) |  |
| RHD4PRSHLSTAIRRC1400 | Staging for Metal Works (Chamber's Covers) - IRRC - SHL-STAG | 2026-02-26 → 2026-12-06 (+283d) | 2026-03-03 → 2026-12-11 (+283d) |  |
| 2 | **RHD4-02-002-SHL-Staging Time - STAG -Irrigation Network - IRR - Network** | 2026-01-31 → 2026-11-09 (+282d) | 2026-06-17 → 2027-01-17 (+214d) |  |
| RHD4PRSHLSTAGIRR1000 | Staging for HDPE pipes - IRR - SHL-STAG | 2026-01-31 → 2026-11-09 (+282d) | 2026-02-05 → 2026-11-14 (+282d) |  |
| RHD4PRSHLSTAGIRR1100 | Staging for Valves - IRR - SHL-STAG | 2026-02-08 → 2026-11-09 (+274d) | 2026-02-13 → 2026-11-14 (+274d) |  |
| RHD4PRSHLSTAGIRR1200 | Staging for Precast Concrete - IRR - SHL-STAG | 2026-02-06 → 2026-11-15 (+282d) | 2026-02-11 → 2026-11-20 (+282d) |  |
| RHD4PRSHLSTAGIRR1300 | Staging for Stem and Surface box - IRR - SHL-STAG | 2026-06-12 → 2027-01-12 (+214d) | 2026-06-17 → 2027-01-17 (+214d) |  |
| RHD4PRSHLSTAGIRR1400 | Staging for Metal Works (Chamber's Covers) - IRR - SHL-STAG | 2026-06-12 → 2027-01-12 (+214d) | 2026-06-17 → 2027-01-17 (+214d) |  |
| 118 | **RHD4-02-002-SHL-Staging Time - STAG -Medium Voltage - MV** | 2026-01-26 → 2026-11-09 (+287d) | 2026-02-01 → 2026-12-12 (+314d) |  |
| RHD4PRSHLSTAGMV1000 | Staging for UPVC Pipes for Duct Banks - SHL-STAG | 2026-01-26 → 2026-11-09 (+287d) | 2026-01-31 → 2026-11-14 (+287d) |  |
| RHD4PRSHLSTAGMV1100 | Staging for Medium Voltage Cable 3Cx500 mm2 - SHL-STAG | 2026-01-27 → 2026-12-07 (+314d) | 2026-02-01 → 2026-12-12 (+314d) |  |
| RHD4PRSHLSTAGMV1200 | Staging for Medium Voltage Cable 3Cx50 mm2 - SHL-STAG | 2026-01-27 → 2026-12-07 (+314d) | 2026-02-01 → 2026-12-12 (+314d) |  |
| RHD4PRSHLSTAGMV1300 | Staging for Straight Joints 3Cx50 mm2 - SHL-STAG | 2026-01-27 → 2026-12-07 (+314d) | 2026-02-01 → 2026-12-12 (+314d) |  |
| RHD4PRSHLSTAGMV1400 | Staging for Normally Open Points (Outdoor type) - SHL-STAG | 2026-01-27 → 2026-12-07 (+314d) | 2026-02-01 → 2026-12-12 (+314d) |  |
| 119 | **RHD4-02-002-SHL-Staging Time - STAG -Low Voltage - LV** | 2026-01-19 → 2026-11-09 (+294d) | 2026-06-23 → 2027-01-23 (+214d) |  |
| RHD4PRSHLSTAGLV1000 | Staging for UPVC Pipes for Duct Banks - SHL-STAG | 2026-01-27 → 2026-11-09 (+286d) | 2026-02-01 → 2026-11-14 (+286d) |  |
| RHD4PRSHLSTAGLV1100 | Staging for Low voltage Cables - SHL-STAG | 2026-01-19 → 2026-11-09 (+294d) | 2026-01-24 → 2026-11-14 (+294d) |  |
| RHD4PRSHLSTAGLV1200 | Staging for Distribution Pillars - SHL-STAG | 2026-01-26 → 2026-11-30 (+308d) | 2026-01-31 → 2026-12-05 (+308d) |  |
| RHD4PRSHLSTAGLV1300 | Staging for KWH Meter mounting Frame - SHL-STAG | 2026-01-26 → 2026-11-30 (+308d) | 2026-01-31 → 2026-12-05 (+308d) |  |
| RHD4PRSHLSTAGLV1500 | Staging for Earthing for Pillars and Panels - SHL-STAG | 2026-02-23 → 2026-11-30 (+280d) | 2026-02-28 → 2026-12-05 (+280d) |  |
| RHD4PRSHLSTAGLV1400 | Staging for Low Voltage Drawpit - SHL-STAG | 2026-06-18 → 2027-01-18 (+214d) | 2026-06-23 → 2027-01-23 (+214d) |  |
| 120 | **RHD4-02-002-SHL-Staging Time - STAG -Street Lighting Network -SL** | 2026-06-24 → 2026-09-15 (+83d) | 2026-07-23 → 2027-01-29 (+190d) |  |
| RHD4PRSHLSTAGSL1000 | Staging for UPVC Pipes for Duct Banks - SHL-STAG | 2026-07-18 → 2026-09-15 A (+59d) | 2026-07-23 → 2026-09-20 A (+59d) | 0% → 100% |
| RHD4PRSHLSTAGSL1400 | Staging for Street Lighting Drawpit - SHL-STAG | 2026-06-24 → 2026-10-07 A (+105d) | 2026-06-29 → 2026-10-12 A (+105d) | 0% → 100% |
| RHD4PRSHLSTAGSL1200 | Staging for Lighting Poles - SHL-STAG | 2026-06-30 → 2026-10-17 A (+109d) | 2026-07-05 → 2026-10-22 A (+109d) | 0% → 100% |
| RHD4PRSHLSTAGSL1300 | Staging for Street Lighting Luminaire - SHL-STAG | 2026-07-12 → 2026-10-27 A (+107d) | 2026-07-17 → 2026-11-01 A (+107d) | 0% → 100% |
| RHD4PRSHLSTAGSL1100 | Staging for Street Lighting Cables - SHL-STAG | 2026-07-06 → 2027-01-24 (+202d) | 2026-07-11 → 2027-01-29 (+202d) |  |
| 121 | **RHD4-02-002-SHL-Staging Time - STAG -Landscape Network - LS** | 2026-01-20 → 2026-11-03 (+287d) | 2026-01-25 → 2026-11-08 (+287d) |  |
| RHD4PRSHLSTAGLS1000 | Staging for Landscape Lighting (Bollard) - SHL-STAG | 2026-01-20 → 2026-11-03 (+287d) | 2026-01-25 → 2026-11-08 (+287d) |  |

| ID | Task | Start | Finish | Complete | Other |
| --- | --- | --- | --- | --- | --- |
| 122 | **RHD4-02-002-SHL-Staging Time - STAG -Telecommunications Network - TC** | 2026-07-24 → 2026-09-08 (+46d) | 2026-08-10 → 2027-02-13 (+187d) |  |  |
| RHD4PRSHLSTAGTC1000 | Staging for HDPE Ducts - SHL-STAG | 2026-07-30 → 2026-09-08 A (+40d) | 2026-08-04 → 2026-09-13 A (+40d) | 0% → 100% |  |
| RHD4PRSHLSTAGTC1100 | Staging for HDPE Road Crossings Ducts - SHL-STAG | 2026-07-24 → 2027-01-24 (+184d) | 2026-07-29 → 2027-01-29 (+184d) |  |  |
| RHD4PRSHLSTAGTC1200 | Staging for Telecommunications Manhole - SHL-STAG | 2026-08-05 → 2027-02-08 (+187d) | 2026-08-10 → 2027-02-13 (+187d) |  |  |
| 123 | **RHD4-02-002-SHL-Staging Time - STAG -Information and Communication Technologies - ICT** | 2026-02-24 → 2026-11-09 (+258d) | 2026-08-22 → 2027-02-25 (+187d) |  |  |
| RHD4PRSHLSTAGICT1200 | Staging for Telecommunications Manhole - SHL-STAG | 2026-02-24 → 2026-11-09 (+258d) | 2026-03-01 → 2026-11-14 (+258d) |  |  |
| RHD4PRSHLSTAGICT1100 | Staging for HDPE Road Crossings Ducts - SHL-STAG | 2026-08-11 → 2027-02-14 (+187d) | 2026-08-16 → 2027-02-19 (+187d) |  |  |
| RHD4PRSHLSTAGICT1000 | Staging for HDPE Ducts - SHL-STAG | 2026-08-17 → 2027-02-20 (+187d) | 2026-08-22 → 2027-02-25 (+187d) |  |  |
| 124 | **RHD4-02-002-SHL-Staging Time - STAG -Security Network - CCTV** | 2026-02-11 → 2026-11-23 (+285d) | 2026-03-12 → 2026-12-19 (+282d) |  |  |
| RHD4PRSHLSTACCTV1000 | Staging for CCTV Network Poles - SHL-STAG | 2026-02-11 → 2026-11-23 (+285d) | 2026-02-16 → 2026-11-28 (+285d) |  |  |
| RHD4PRSHLSTACCTV1200 | Staging for CCTV Panels and Panel's Components - SHL-STAG | 2026-02-18 → 2026-11-30 (+285d) | 2026-02-23 → 2026-12-05 (+285d) |  |  |
| RHD4PRSHLSTACCTV1300 | Staging for CCTV Fiber Optic Cables - SHL-STAG | 2026-03-04 → 2026-12-12 (+283d) | 2026-03-09 → 2026-12-17 (+283d) |  |  |
| RHD4PRSHLSTACCTV1100 | Staging for CCTV Network Cameras - SHL-STAG | 2026-03-07 → 2026-12-14 (+282d) | 2026-03-12 → 2026-12-19 (+282d) |  |  |
| 125 | **RHD4-02-002-SHL-Staging Time - STAG -Road Works - RD** | 2026-01-12 → 2026-11-09 (+301d) | 2026-03-01 → 2026-12-12 (+286d) |  |  |
| RHD4PRSHLSTAGRD1000 | Staging for Aggregate Base Courses - SHL-STAG | 2026-01-12 → 2026-11-09 (+301d) | 2026-01-17 → 2026-11-14 (+301d) |  |  |
| RHD4PRSHLSTAGRD1100 | Staging for Bituminous Asphalt Layers - SHL-STAG | 2026-01-19 → 2026-11-09 (+294d) | 2026-01-24 → 2026-11-14 (+294d) |  |  |
| RHD4PRSHLSTAGRD1200 | Staging for Precast Concrete Curbstone - SHL-STAG | 2026-01-26 → 2026-11-09 (+287d) | 2026-01-31 → 2026-11-14 (+287d) |  |  |
| RHD4PRSHLSTAGRD1600 | Staging for Traffic Signage - SHL-STAG | 2026-02-02 → 2026-11-16 (+287d) | 2026-02-07 → 2026-11-21 (+287d) |  |  |
| RHD4PRSHLSTAGRD1300 | Staging for Interlock Precast Concrete Unit Paving - SHL-STAG | 2026-02-10 → 2026-11-23 (+286d) | 2026-02-15 → 2026-11-28 (+286d) |  |  |
| RHD4PRSHLSTAGRD1400 | Staging for Wheel Stopper - SHL-STAG | 2026-02-17 → 2026-11-30 (+286d) | 2026-02-22 → 2026-12-05 (+286d) |  |  |
| RHD4PRSHLSTAGRD1500 | Staging for Pavement Marking - SHL-STAG | 2026-02-24 → 2026-12-07 (+286d) | 2026-03-01 → 2026-12-12 (+286d) |  |  |
| 1 | **RHD4-02-002-SHL-Staging Time - STAG -Lift Stations - LFS** | 2026-01-05 → 2026-11-09 (+308d) | 2026-02-14 → 2026-12-12 (+301d) |  |  |
| RHD4PRSHLSTAGLFS1700 | Staging Time for Ductile Iron Pipes & Fittings - SHL-STAG | 2026-01-12 → 2026-11-09 (+301d) | 2026-01-17 → 2026-11-14 (+301d) |  |  |
| RHD4PRSHLSTAGLFS1800 | Staging Time for Sewage Lift Station Valves - SHL-STAG | 2026-01-19 → 2026-11-09 (+294d) | 2026-01-24 → 2026-11-14 (+294d) |  |  |
| RHD4PRSHLSTAGLFS1900 | Staging Time for Basket screen - SHL-STAG | 2026-02-03 → 2026-11-09 (+279d) | 2026-02-08 → 2026-11-14 (+279d) |  |  |
| RHD4PRSHLSTAGLFS2600 | Staging Time for Low Voltage Cables - SHL-STAG | 2026-01-26 → 2026-11-09 (+287d) | 2026-01-31 → 2026-11-14 (+287d) |  |  |
| RHD4PRSHLSTAGLFS2700 | Staging Time for Lighting Fixtures - SHL-STAG | 2026-02-09 → 2026-11-09 (+273d) | 2026-02-14 → 2026-11-14 (+273d) |  |  |
| RHD4PRSHLSTAGLFS1100 | Staging Time for Roof Waterproofing System - SHL-STAG | 2026-01-13 → 2026-11-16 (+307d) | 2026-01-18 → 2026-11-21 (+307d) |  |  |
| RHD4PRSHLSTAGLFS1200 | Staging Time for Bituminous Sheet Waterproofing - SHL-STAG | 2026-01-21 → 2026-11-16 (+299d) | 2026-01-26 → 2026-11-21 (+299d) |  |  |
| RHD4PRSHLSTAGLFS1600 | Staging Time for Epoxy Coating - SHL-STAG | 2026-01-31 → 2026-11-16 (+289d) | 2026-02-05 → 2026-11-21 (+289d) |  |  |
| RHD4PRSHLSTAGLFS2100 | Staging Time for UPVC Pipes for Sanitary Drain - SHL-STAG | 2026-01-12 → 2026-11-16 (+308d) | 2026-01-17 → 2026-11-21 (+308d) |  |  |
| RHD4PRSHLSTAGLFS2400 | Staging Time for lighting and power panel boards - SHL-STAG | 2026-01-28 → 2026-11-16 (+292d) | 2026-02-02 → 2026-11-21 (+292d) |  |  |
| RHD4PRSHLSTAGLFS3000 | Staging Time for Fire Alarm System - SHL-STAG | 2026-01-05 → 2026-11-16 (+315d) | 2026-01-10 → 2026-11-21 (+315d) |  |  |
| RHD4PRSHLSTAGLFS1300 | Staging Time for Fluid-Applied Waterproofing - SHL-STAG | 2026-02-02 → 2026-11-23 (+294d) | 2026-02-07 → 2026-11-28 (+294d) |  |  |
| RHD4PRSHLSTAGLFS2300 | Staging Time for Motor Control Center (MCC) - SHL-STAG | 2026-01-24 → 2026-11-23 (+303d) | 2026-01-29 → 2026-11-28 (+303d) |  |  |
| RHD4PRSHLSTAGLFS2800 | Staging Time for Wiring Devices - SHL-STAG | 2026-01-08 → 2026-11-23 (+319d) | 2026-01-13 → 2026-11-28 (+319d) |  |  |
| RHD4PRSHLSTAGLFS1000 | Staging Time for Metal Ladder and checkered Plate - SHL-STAG | 2026-02-08 → 2026-11-30 (+295d) | 2026-02-13 → 2026-12-05 (+295d) |  |  |
| RHD4PRSHLSTAGLFS1400 | Staging Time for Metal Doors and Access Doors and Frames - SHL-STAG | 2026-01-08 → 2026-11-30 (+326d) | 2026-01-13 → 2026-12-05 (+326d) |  |  |
| RHD4PRSHLSTAGLFS2200 | Staging Time for wall mounted Split/AC - SHL-STAG | 2026-02-01 → 2026-11-30 (+302d) | 2026-02-06 → 2026-12-05 (+302d) |  |  |
| RHD4PRSHLSTAGLFS2900 | Staging Time for Enclosed Switches and Circuit Breakers - SHL-STAG | 2026-01-08 → 2026-11-30 (+326d) | 2026-01-13 → 2026-12-05 (+326d) |  |  |
| RHD4PRSHLSTAGLFS1500 | Staging Time for Painting - SHL-STAG | 2026-01-17 → 2026-12-07 (+324d) | 2026-01-22 → 2026-12-12 (+324d) |  |  |
| RHD4PRSHLSTAGLFS2500 | Staging Time for Earthing for Lift Stations - SHL-STAG | 2026-01-15 → 2026-12-07 (+326d) | 2026-01-20 → 2026-12-12 (+326d) |  |  |
| RHD4PRSHLSTAGLFS3100 | Staging Time for Fences and Gates - SHL-STAG | 2026-01-24 → 2026-12-07 (+317d) | 2026-01-29 → 2026-12-12 (+317d) |  |  |
| 137 | **RHD4-02-002-Construction** |  | 2028-04-02 → 2028-11-08 (+220d) |  |  |
| 138 | **Demolition - DM** | 2027-06-24 → 2026-09-19 (-278d) | 2027-10-26 → 2028-04-04 (+161d) |  |  |
| 139 | **RHD4-02-002-Demolition - DM** | 2027-06-24 → 2026-09-19 (-278d) | 2027-10-26 → 2028-04-04 (+161d) |  |  |
| 148 | **Z3** | 2027-06-24 → 2026-09-19 (-278d) | 2027-08-11 → 2028-01-16 (+158d) |  |  |
| 150 | **RHD4-02-002-Demolition - DM-Z3-(RD-C-8 /3)** | 2027-06-24 → 2026-09-19 (-278d) | 2027-08-11 → 2028-01-16 (+158d) |  |  |
| RHD4CZ3C083DM1200 | Removal of Trees for Road (RD-C-8 /3) - (B1.02 41 00.03)-Z3-C083-DM | 2027-08-08 → 2026-09-19 A (-323d) | 2027-08-11 → 2028-01-16 (+158d) | 0% → 82% |  |
| RHD4CZ3C083DM1000 | Removal of curbstone for Road (RD-C-8 /3) - (B1.02 41 00.01)-Z3-C083-DM | 2027-06-24 → 2027-12-01 (+160d) | 2027-06-27 → 2027-12-04 (+160d) |  |  |
| RHD4CZ3C083DM1100 | Removal of sidewalk for Road (RD-C-8 /3) - (B1.02 41 00.02)-Z3-C083-DM | 2027-06-28 → 2027-12-05 (+160d) | 2027-07-07 → 2027-12-14 (+160d) |  | resources Skilled labor [180.78 h]; Unskilled Labor [542.34 h]; Equipment Opreator [90.39 h]; Dump Truck [90.39 h]; Removal of sidewalk [1245 m2] → Skilled labor [180.8 h]; Unskilled Labor [542.34 h]; Equipment Opreator [90.4 h]; Dump Truck [90.4 h]; Removal of sidewalk [1245 m2] |
| RHD4CZ3C083DM1300 | Removal of existing New Jersy for Road (RD-C-8 /3) - (B1.02 41 00.04)-Z3-C083-DM | 2027-07-08 → 2027-12-15 (+160d) | 2027-07-10 → 2027-12-16 (+159d) |  |  |
| RHD4CZ3C083DM1400 | Relocation of existing Electrical cable for Road (RD-C-8 /3) - (B1.02 41 00.09)-Z3-C083-DM | 2027-07-11 → 2027-12-18 (+160d) | 2027-07-18 → 2027-12-25 (+160d) |  |  |
| RHD4CZ3C083DM1500 | Relocation of existing Electrical manhole for Road (RD-C-8 /3) - (B1.02 41 00.10)-Z3-C083-DM | 2027-07-19 → 2027-12-26 (+160d) | 2027-07-21 → 2027-12-28 (+160d) |  |  |
| RHD4CZ3C083DM1600 | Relocation of existing Sewer manholes for Road (RD-C-8 /3) - (B1.02 41 00.11)-Z3-C083-DM | 2027-07-22 → 2027-12-29 (+160d) | 2027-07-24 → 2027-12-30 (+159d) |  |  |
| RHD4CZ3C083DM1700 | Relocation of existing Storm manholes for Road (RD-C-8 /3) - (B1.02 41 00.12)-Z3-C083-DM | 2027-07-25 → 2028-01-01 (+160d) | 2027-07-26 → 2028-01-02 (+160d) |  |  |
| RHD4CZ3C083DM1800 | Relocation of existing Waterline for Road (RD-C-8 /3) - (B1.02 41 00.13)-Z3-C083-DM | 2027-07-27 → 2028-01-03 (+160d) | 2027-08-02 → 2028-01-09 (+160d) |  |  |
| RHD4CZ3C083DM2000 | Relocation of existing Medium tension Pole for Road (RD-C-8 /3) - (B1.02 41 00.15)-Z3-C083-DM | 2027-08-03 → 2028-01-10 (+160d) | 2027-08-07 → 2028-01-13 (+159d) |  |  |
| 143 | **Z2** | 2027-08-12 → 2028-01-17 (+158d) | 2027-09-14 → 2028-02-19 (+158d) |  |  |
| 144 | **RHD4-02-002-Demolition - DM-Z2-(RD-C-8 /2)** | 2027-08-12 → 2028-01-17 (+158d) | 2027-09-14 → 2028-02-19 (+158d) |  |  |
| RHD4CZ2C082DM1000 | Removal of curbstone for Road (RD-C-8 /2) - (B1.02 41 00.01)-Z2-C082-DM | 2027-08-12 → 2028-01-17 (+158d) | 2027-08-16 → 2028-01-20 (+157d) |  |  |
| RHD4CZ2C082DM1100 | Removal of sidewalk for Road (RD-C-8 /2) - (B1.02 41 00.02)-Z2-C082-DM | 2027-08-17 → 2028-01-22 (+158d) | 2027-08-25 → 2028-01-30 (+158d) |  |  |
| RHD4CZ2C082DM1300 | Removal of existing New Jersy for Road (RD-C-8 /2) - (B1.02 41 00.04)-Z2-C082-DM | 2027-08-26 → 2028-01-31 (+158d) | 2027-08-28 → 2028-02-01 (+157d) |  |  |
| RHD4CZ2C082DM1500 | Relocation of existing Electrical manhole for Road (RD-C-8 /2) - (B1.02 41 00.10)-Z2-C082-DM | 2027-08-29 → 2028-02-02 (+157d) | 2027-08-31 → 2028-02-05 (+158d) |  |  |
| RHD4CZ2C082DM1800 | Relocation of existing Waterline for Road (RD-C-8 /2) - (B1.02 41 00.13)-Z2-C082-DM | 2027-09-01 → 2028-02-06 (+158d) | 2027-09-14 → 2028-02-19 (+158d) |  |  |
| 140 | **Z1** | 2027-09-15 → 2028-02-20 (+158d) | 2027-10-26 → 2028-04-04 (+161d) |  |  |
| 141 | **RHD4-02-002-Demolition - DM-Z1-(RD-C-8 /1)** | 2027-09-15 → 2028-02-20 (+158d) | 2027-10-26 → 2028-04-04 (+161d) |  |  |
| RHD4CZ1C081DM1000 | Removal of curbstone for Road (RD-C-8 /1) - (B1.02 41 00.01)-Z1-C081-DM | 2027-09-15 → 2028-02-20 (+158d) | 2027-09-20 → 2028-02-26 (+159d) |  |  |
| RHD4CZ1C081DM1100 | Removal of sidewalk for Road (RD-C-8 /1) - (B1.02 41 00.02)-Z1-C081-DM | 2027-09-21 → 2028-03-01 (+162d) | 2027-09-30 → 2028-03-09 (+161d) |  |  |
| RHD4CZ1C081DM1300 | Removal of existing New Jersy for Road (RD-C-8 /1) - (B1.02 41 00.04)-Z1-C081-DM | 2027-10-02 → 2028-03-11 (+161d) | 2027-10-05 → 2028-03-14 (+161d) |  |  |

| ID | Task | Start | Finish | Complete | Other |
| --- | --- | --- | --- | --- | --- |
| RHD4CZ1C081DM1600 | Relocation of existing Sewer manholes for Road (RD-C-8 /1) - (B1.02 41 00.11)-Z1-C081-DM | 2027-10-06 → 2028-03-15 (+161d) | 2027-10-07 → 2028-03-16 (+161d) |  |  |
| RHD4CZ1C081DM1800 | Relocation of existing Waterline for Road (RD-C-8 /1) - (B1.02 41 00.13)-Z1-C081-DM | 2027-10-09 → 2028-03-18 (+161d) | 2027-10-20 → 2028-03-29 (+161d) |  |  |
| RHD4CZ1C081DM1900 | Relocation of existing light poles for Road (RD-C-8 /1) - (B1.02 41 00.14)-Z1-C081-DM | 2027-10-21 → 2028-03-30 (+161d) | 2027-10-23 → 2028-04-01 (+161d) |  |  |
| RHD4CZ1C081DM2000 | Relocation of existing Medium tension Pole for Road (RD-C-8 /1) - (B1.02 41 00.15)-Z1-C081-DM | 2027-10-24 → 2028-04-02 (+161d) | 2027-10-26 → 2028-04-04 (+161d) |  | resources Unskilled Labor [63.16 h]; Electrician [31.58 h]; Equipment Opreator [63.16 h]; Boom Truck [31.58 h]; Dump Truck [31.58 h]; Relocation of existing Medium tension Pole [29 nr] → Unskilled Labor [63.2 h]; Electrician [31.58 h]; Equipment Opreator [63.2 h]; Boom Truck [31.58 h]; Dump Truck [31.58 h]; Relocation of existing Medium tension Pole [29 nr] |
| 152 | **Earthworks - EW** |  | 2027-08-05 → 2028-02-15 (+194d) |  |  |
| 153 | **RHD4-02-002-Block Works-EX** | 2026-08-23 → 2026-02-16 (-188d) | 2027-05-20 → 2027-08-22 (+94d) |  |  |
| 175 | **RHD4-02-002-Z6-Block Wokrs - Excavation** | 2026-08-23 → 2026-02-17 (-187d) | 2026-12-15 → 2027-02-20 (+67d) |  |  |
| 176 | **RHD4-02-002-Block Works-EX-Z6-BLOCK-15** | 2026-08-23 → 2026-03-17 (-159d) | 2026-09-01 → 2026-09-30 (+29d) |  |  |
| RHD4CZ6B15EX1000 | Excavation works for Block 15 - (B1.31 23 16.01)-Z6-B15-EX | 2026-08-23 → 2026-03-17 A (-159d) | 2026-09-01 → 2026-09-30 A (+29d) | 0% → 100% |  |
| 179 | **RHD4-02-002-Block Works-EX-Z6-BLOCK-Z6** | 2026-09-02 → 2026-03-15 (-171d) | 2026-09-12 → 2026-09-30 (+18d) |  |  |
| RHD4CZ6BZ6EX1000 | Excavation works for Block BZ6 - (B1.31 23 16.01)-Z6-BZ6-EX | 2026-09-02 → 2026-03-15 A (-171d) | 2026-09-12 → 2026-09-30 A (+18d) | 0% → 100% |  |
| 178 | **RHD4-02-002-Block Works-EX-Z6-BLOCK-17** | 2026-09-13 → 2026-02-17 (-208d) | 2026-10-14 → 2027-02-20 (+129d) |  |  |
| RHD4CZ6B17EX1000 | Excavation works for Block 17 - Stage 1 - (B1.31 23 16.01)-Z6-B17-EX | 2026-09-13 → 2026-02-17 A (-208d) | 2026-09-22 → 2026-03-08 A (-198d) | 0% → 100% |  |
| RHD4CZ6B17EX1001 | Excavation works for Block 17 - Stage 2 - (B1.31 23 16.01)-Z6-B17-EX | 2026-09-24 → 2026-03-09 A (-199d) | 2026-10-04 → 2026-03-29 A (-189d) | 0% → 100% |  |
| RHD4CZ6B17EX1002 | Excavation works for Block 17 - Stage 3 - (B1.31 23 16.01)-Z6-B17-EX(Completed) | 2026-10-05 → 2026-08-04 A (-62d) | 2026-10-14 → 2027-02-20 (+129d) | 0% → 87% |  |
| 177 | **RHD4-02-002-Block Works-EX-Z6-BLOCK-16** | 2026-12-06 → 2026-03-07 (-274d) | 2026-12-15 → 2026-08-03 (-134d) |  |  |
| RHD4CZ6B16EX1000 | Excavation works for Block 16 - (B1.31 23 16.01)-Z6-B16-EX(Completed) | 2026-12-06 → 2026-03-07 A (-274d) | 2026-12-15 → 2026-08-03 A (-134d) | 0% → 100% |  |
| 169 | **RHD4-02-002-Z5-Block Wokrs - Excavation** | 2026-12-16 → 2026-02-16 (-303d) | 2027-03-16 → 2027-07-01 (+107d) |  |  |
| 171 | **RHD4-02-002-Block Works-EX-Z5-BLOCK-11** | 2027-02-11 → 2026-03-23 (-325d) | 2027-03-06 → 2026-07-30 (-219d) |  |  |
| RHD4CZ5B11EX1000 | Excavation works for Block 11 - Stage 1 - (B1.31 23 16.01)-Z5-B11-EX | 2027-02-11 → 2026-03-23 A (-325d) | 2027-02-25 → 2026-04-05 A (-326d) | 0% → 100% |  |
| RHD4CZ5B11EX1001 | Excavation works for Block 11 - Stage 2 - (B1.31 23 16.01)-Z5-B11-EX | 2027-02-27 → 2026-04-06 A (-327d) | 2027-03-06 → 2026-07-30 A (-219d) | 0% → 100% |  |
| 170 | **RHD4-02-002-Block Works-EX-Z5-BLOCK-10** | 2026-12-16 → 2026-03-26 (-265d) | 2027-01-05 → 2027-06-27 (+173d) |  |  |
| RHD4CZ5B10EX1000 | Excavation works for Block 10 - Stage 1 - (B1.31 23 16.01)-Z5-B10-EX | 2026-12-16 → 2026-03-26 A (-265d) | 2026-12-26 → 2026-05-23 A (-217d) | 0% → 100% |  |
| RHD4CZ5B10EX1001 | Excavation works for Block 10 - Stage 2 - (B1.31 23 16.01)-Z5-B10-EX | 2026-12-27 → 2026-05-24 A (-217d) | 2027-01-05 → 2027-06-27 (+173d) | 0% → 52% |  |
| 172 | **RHD4-02-002-Block Works-EX-Z5-BLOCK-12** | 2027-01-06 → 2026-02-17 (-323d) | 2027-02-10 → 2027-07-01 (+141d) |  |  |
| RHD4CZ5B12EX1000 | Excavation works for Block 12 - Stage 1 - (B1.31 23 16.01)-Z5-B12-EX | 2027-01-06 → 2026-02-17 A (-323d) | 2027-01-17 → 2026-03-01 A (-322d) | 0% → 100% |  |
| RHD4CZ5B12EX1001 | Excavation works for Block 12 - Stage 2 - (B1.31 23 16.01)-Z5-B12-EX | 2027-01-18 → 2026-03-02 A (-322d) | 2027-01-30 → 2026-03-13 A (-323d) | 0% → 100% |  |
| RHD4CZ5B12EX1002 | Excavation works for Block 12 - Stage 3 - (B1.31 23 16.01)-Z5-B12-EX | 2027-01-31 → 2026-03-14 A (-323d) | 2027-02-04 → 2026-03-27 A (-314d) | 0% → 100% |  |
| RHD4CZ5B12EX1003 | Excavation works for Block 12 - Stage 4 - (B1.31 23 16.01)-Z5-B12-EX | 2027-02-06 → 2026-03-28 A (-315d) | 2027-02-10 → 2027-07-01 (+141d) | 0% → 21% |  |
| 173 | **RHD4-02-002-Block Works-EX-Z5-BLOCK-13** | 2027-01-06 → 2026-02-16 (-324d) | 2027-01-23 → 2026-02-19 (-338d) |  |  |
| RHD4CZ5B13EX1000 | Excavation works for Block 13 - (B1.31 23 16.01)-Z5-B13-EX(Completed) | 2027-01-06 → 2026-02-16 A (-324d) | 2027-01-23 → 2026-02-19 A (-338d) | 0% → 100% |  |
| 174 | **RHD4-02-002-Block Works-EX-Z5-BLOCK-14** | 2027-01-24 → 2026-03-08 (-322d) | 2027-03-16 → 2026-08-03 (-225d) |  |  |
| RHD4CZ5B14EX1000 | Excavation works for Block 14 - Stage 1 - (B1.31 23 16.01)-Z5-B14-EX | 2027-01-24 → 2026-03-08 A (-322d) | 2027-02-01 → 2026-03-25 A (-313d) | 0% → 100% |  |
| RHD4CZ5B14EX1001 | Excavation works for Block 14 - Stage 2 - (B1.31 23 16.01)-Z5-B14-EX | 2027-02-02 → 2026-03-26 A (-313d) | 2027-02-10 → 2026-04-11 A (-305d) | 0% → 100% |  |
| RHD4CZ5B14EX1002 | Excavation works for Block 14 - Stage 3 - (B1.31 23 16.01)-Z5-B14-EX | 2027-02-11 → 2026-04-12 A (-305d) | 2027-02-28 → 2026-04-27 A (-307d) | 0% → 100% |  |
| RHD4CZ5B14EX1003 | Excavation works for Block 14 - Stage 4 - (B1.31 23 16.01)-Z5-B14-EX(Completed) | 2027-03-01 → 2026-04-28 A (-307d) | 2027-03-16 → 2026-08-03 A (-225d) | 0% → 100% |  |
| 188 | **RHD4-02-002-Z8-Block Wokrs - Excavation** | 2027-02-11 → 2026-07-18 (-208d) | 2027-04-25 → 2027-08-22 (+119d) |  |  |
| 193 | **RHD4-02-002-Block Works-EX-Z8-BLOCK-29** | 2027-03-02 → 2027-07-01 (+121d) | 2027-03-15 → 2027-07-12 (+119d) |  |  |
| RHD4CZ8B29EX1000 | Excavation works for Block 29 - (B1.31 23 16.01)-Z8-B29-EX | 2027-03-02 → 2027-07-01 (+121d) | 2027-03-15 → 2027-07-12 (+119d) |  |  |
| 192 | **RHD4-02-002-Block Works-EX-Z8-BLOCK-28** | 2027-03-16 → 2027-07-12 (+118d) | 2027-04-08 → 2027-08-05 (+119d) |  |  |
| RHD4CZ8B28EX1000 | Excavation works for Block 28 - (B1.31 23 16.01)-Z8-B28-EX | 2027-03-16 → 2027-07-12 (+118d) | 2027-04-08 → 2027-08-05 (+119d) |  |  |
| 191 | **RHD4-02-002-Block Works-EX-Z8-BLOCK-27** | 2027-04-10 → 2027-08-05 (+117d) | 2027-04-18 → 2027-08-15 (+119d) |  |  |
| RHD4CZ8B27EX1000 | Excavation works for Block 27 - (B1.31 23 16.01)-Z8-B27-EX | 2027-04-10 → 2027-08-05 (+117d) | 2027-04-18 → 2027-08-15 (+119d) |  |  |
| 190 | **RHD4-02-002-Block Works-EX-Z8-BLOCK-26** | 2027-04-19 → 2027-08-15 (+118d) | 2027-04-25 → 2027-08-22 (+119d) |  |  |
| RHD4CZ8B26EX1000 | Excavation works for Block 26 - (B1.31 23 16.01)-Z8-B26-EX | 2027-04-19 → 2027-08-15 (+118d) | 2027-04-25 → 2027-08-22 (+119d) |  |  |
| 189 | **RHD4-02-002-Block Works-EX-Z8-BLOCK-25** | 2027-02-11 → 2026-07-18 (-208d) | 2027-03-01 → 2026-08-03 (-210d) |  |  |
| RHD4CZ8B25EX1000 | Excavation works for Block 25 - (B1.31 23 16.01)-Z8-B25-EX(Completed) | 2027-02-11 → 2026-07-18 A (-208d) | 2027-03-01 → 2026-08-03 A (-210d) | 0% → 100% |  |
| 180 | **RHD4-02-002-Z7-Block Wokrs - Excavation** | 2027-03-02 → 2026-03-30 (-337d) | 2027-04-17 → 2027-07-06 (+80d) |  |  |
| 181 | **RHD4-02-002-Block Works-EX-Z7-BLOCK-18** | 2027-03-02 → 2026-05-12 (-294d) | 2027-03-22 → 2026-07-18 (-247d) |  |  |
| RHD4CZ7B18EX1000 | Excavation works for Block 18 - (B1.31 23 16.01)-Z7-B18-EX(Completed) | 2027-03-02 → 2026-05-12 A (-294d) | 2027-03-22 → 2026-07-18 A (-247d) | 0% → 100% |  |
| 182 | **RHD4-02-002-Block Works-EX-Z7-BLOCK-19** | 2027-03-02 → 2026-04-15 (-321d) | 2027-03-22 → 2026-08-03 (-231d) |  |  |
| RHD4CZ7B19EX1000 | Excavation works for Block 19 - (B1.31 23 16.01)-Z7-B19-EX(Completed) | 2027-03-02 → 2026-04-15 A (-321d) | 2027-03-22 → 2026-08-03 A (-231d) | 0% → 100% |  |
| 183 | **RHD4-02-002-Block Works-EX-Z7-BLOCK-20** | 2027-03-02 → 2026-03-30 (-337d) | 2027-04-12 → 2026-08-18 (-237d) |  |  |
| RHD4CZ7B20EX1000 | Excavation works for Block 20 - Stage 1 - (B1.31 23 16.01)-Z7-B20-EX | 2027-03-02 → 2026-03-30 A (-337d) | 2027-03-08 → 2026-04-07 A (-335d) | 0% → 100% |  |
| RHD4CZ7B20EX1001 | Excavation works for Block 20 - stage 2 - (B1.31 23 16.01)-Z7-B20-EX | 2027-03-13 → 2026-04-08 A (-339d) | 2027-03-20 → 2026-04-15 A (-339d) | 0% → 100% |  |
| RHD4CZ7B20EX1002 | Excavation works for Block 20 - Stage 3 - (B1.31 23 16.01)-Z7-B20-EX | 2027-03-21 → 2026-04-08 A (-347d) | 2027-03-28 → 2026-04-15 A (-347d) | 0% → 100% |  |
| RHD4CZ7B20EX1003 | Excavation works for Block 20 - Stage 4 - (B1.31 23 16.01)-Z7-B20-EX | 2027-03-29 → 2026-04-18 A (-345d) | 2027-04-04 → 2026-04-29 A (-340d) | 0% → 100% |  |
| RHD4CZ7B20EX1004 | Excavation works for Block 20 - Stage 5 - (B1.31 23 16.01)-Z7-B20-EX(Completed) | 2027-04-05 → 2026-08-04 A (-244d) | 2027-04-12 → 2026-08-18 A (-237d) | 0% → 100% |  |
| 184 | **RHD4-02-002-Block Works-EX-Z7-BLOCK-21** | 2027-04-13 → 2027-07-01 (+79d) | 2027-04-17 → 2027-07-06 (+80d) |  |  |
| RHD4CZ7B21EX1000 | Excavation works for Block 21 - Stage 1 - (B1.31 23 16.01)-Z7-B21-EX | 2027-04-13 → 2027-07-01 (+79d) | 2027-04-14 → 2027-07-04 (+81d) |  |  |
| RHD4CZ7B21EX1001 | Excavation works for Block 21 - stage 2 - (B1.31 23 16.01)-Z7-B21-EX | 2027-04-15 → 2027-07-04 (+80d) | 2027-04-17 → 2027-07-06 (+80d) |  |  |
| 185 | **RHD4-02-002-Block Works-EX-Z7-BLOCK-22** | 2027-03-02 → 2026-07-16 (-229d) | 2027-03-23 → 2026-08-03 (-232d) |  |  |
| RHD4CZ7B22EX1000 | Excavation works for Block 22 - (B1.31 23 16.01)-Z7-B22-EX(Completed) | 2027-03-02 → 2026-07-16 A (-229d) | 2027-03-23 → 2026-08-03 A (-232d) | 0% → 100% |  |
| 186 | **RHD4-02-002-Block Works-EX-Z7-BLOCK-23** | 2027-03-13 → 2026-06-30 (-256d) | 2027-03-23 → 2027-07-04 (+103d) |  |  |
| RHD4CZ7B23EX1000 | Excavation works for Block 23 - (B1.31 23 16.01)-Z7-B23-EX | 2027-03-13 → 2026-06-30 A (-256d) | 2027-03-23 → 2027-07-04 (+103d) | 0% → 81% |  |
| 187 | **RHD4-02-002-Block Works-EX-Z7-BLOCK-24** | 2027-03-24 → 2026-07-18 (-249d) | 2027-04-10 → 2026-08-03 (-250d) |  |  |
| RHD4CZ7B24EX1000 | Excavation works for Block 24 - (B1.31 23 16.01)-Z7-B24-EX(Completed) | 2027-03-24 → 2026-07-18 A (-249d) | 2027-04-10 → 2026-08-03 A (-250d) | 0% → 100% |  |
| 158 | **RHD4-02-002-Z2-Block Wokrs - Excavation** | 2027-02-02 → 2026-06-30 (-217d) | 2027-04-13 → 2026-09-30 (-195d) |  |  |
| 159 | **RHD4-02-002-Block Works-EX-Z2-BLOCK-04** | 2027-02-02 → 2026-06-30 (-217d) | 2027-03-23 → 2026-09-18 (-186d) |  |  |
| RHD4CZ2B04EX1000 | Excavation works for Block 04 - Stage 1 - (B1.31 23 16.01)-Z2-B04-EX(Completed) | 2027-02-02 → 2026-06-30 A (-217d) | 2027-02-16 → 2026-08-03 A (-197d) | 0% → 100% |  |

| ID | Task | Start | Finish | Duration | Complete | Other |
| --- | --- | --- | --- | --- | --- | --- |
| RHD4CZ2B04EX1001 | Excavation works for Block 04 - Stage 2 - (B1.31 23 16.01)-Z2-B04-EX | 2027-02-17 → 2026-08-08 A (-193d) | 2027-03-04 → 2026-09-03 A (-182d) |  | 0% → 100% |  |
| RHD4CZ2B04EX1002 | Excavation works for Block 04 - Stage 3 - (B1.31 23 16.01)-Z2-B04-EX | 2027-03-06 → 2026-09-05 A (-182d) | 2027-03-23 → 2026-09-18 A (-186d) |  | 0% → 100% |  |
| 160 | **RHD4-02-002-Block Works-EX-Z2-BLOCK-05** | 2027-03-24 → 2026-08-29 (-207d) | 2027-04-13 → 2026-09-30 (-195d) |  |  |  |
| RHD4CZ2B05EX1000 | Excavation works for Block 05 - Stage 1 - (B1.31 23 16.01)-Z2-B05-EX | 2027-03-24 → 2026-08-29 A (-207d) | 2027-04-03 → 2026-09-19 A (-196d) |  | 0% → 100% |  |
| RHD4CZ2B05EX1001 | Excavation works for Block 05 - Stage 2 - (B1.31 23 16.01)-Z2-B05-EX | 2027-04-04 → 2026-09-20 A (-196d) | 2027-04-13 → 2026-09-30 A (-195d) |  | 0% → 100% |  |
| 161 | **RHD4-02-002-Z3-Block Wokrs - Excavation** | 2027-03-24 → 2026-06-02 (-295d) | 2027-04-29 → 2026-08-03 (-269d) |  |  |  |
| 162 | **RHD4-02-002-Block Works-EX-Z3-BLOCK-Z3** | 2027-03-24 → 2026-06-02 (-295d) | 2027-04-29 → 2026-08-03 (-269d) |  |  |  |
| RHD4CZ3BZ3EX1000 | Excavation works for Block BZ3 - Stage 1 - (B1.31 23 16.01)-Z3-BZ3-EX | 2027-03-24 → 2026-06-02 A (-295d) | 2027-03-29 → 2026-06-07 A (-295d) |  | 0% → 100% |  |
| RHD4CZ3BZ3EX1001 | Excavation works for Block BZ3 - Stage 2 - (B1.31 23 16.01)-Z3-BZ3-EX | 2027-03-30 → 2026-06-08 A (-295d) | 2027-04-14 → 2026-06-23 A (-295d) |  | 0% → 100% |  |
| RHD4CZ3BZ3EX1002 | Excavation works for Block BZ3 - Stage 3 - (B1.31 23 16.01)-Z3-BZ3-EX(Completed) | 2027-04-15 → 2026-06-24 A (-295d) | 2027-04-29 → 2026-08-03 A (-269d) |  | 0% → 100% |  |
| 194 | **RHD4-02-002-Z9-Block Wokrs - Excavation** | 2027-03-30 → 2026-07-16 (-257d) | 2027-05-09 → 2027-07-12 (+64d) |  |  |  |
| 196 | **RHD4-02-002-Block Works-EX-Z9-BLOCK-31** | 2027-03-30 → 2026-07-16 (-257d) | 2027-04-24 → 2026-08-03 (-264d) |  |  |  |
| RHD4CZ9B31EX1000 | Excavation works for Block 31 - Stage 1 - (B1.31 23 16.01)-Z9-B31-EX | 2027-03-30 → 2026-07-16 A (-257d) | 2027-04-01 → 2026-07-19 A (-256d) |  | 0% → 100% |  |
| RHD4CZ9B31EX1001 | Excavation works for Block 31 - stage 2 - (B1.31 23 16.01)-Z9-B31-EX | 2027-04-03 → 2026-07-16 A (-261d) | 2027-04-05 → 2026-07-19 A (-260d) |  | 0% → 100% |  |
| RHD4CZ9B31EX1002 | Excavation works for Block 31 - Stage 3 - (B1.31 23 16.01)-Z9-B31-EX(Completed) | 2027-04-06 → 2026-07-16 A (-264d) | 2027-04-24 → 2026-08-03 A (-264d) |  | 0% → 100% |  |
| 198 | **RHD4-02-002-Block Works-EX-Z9-BLOCK-33** | 2027-04-06 → 2026-07-16 (-264d) | 2027-04-24 → 2026-08-03 (-264d) |  |  |  |
| RHD4CZ9B33EX1000 | Excavation works for Block 33 - (B1.31 23 16.01)-Z9-B33-EX(Completed) | 2027-04-06 → 2026-07-16 A (-264d) | 2027-04-24 → 2026-08-03 A (-264d) |  | 0% → 100% |  |
| 197 | **RHD4-02-002-Block Works-EX-Z9-BLOCK-32** | 2027-04-06 → 2026-07-18 (-262d) | 2027-04-22 → 2026-08-03 (-262d) |  |  |  |
| RHD4CZ9B32EX1000 | Excavation works for Block 32 - (B1.31 23 16.01)-Z9-B32-EX(Completed) | 2027-04-06 → 2026-07-18 A (-262d) | 2027-04-22 → 2026-08-03 A (-262d) |  | 0% → 100% |  |
| 195 | **RHD4-02-002-Block Works-EX-Z9-BLOCK-30** | 2027-04-25 → 2027-06-28 (+64d) | 2027-05-04 → 2027-07-07 (+64d) |  |  |  |
| RHD4CZ9B30EX1000 | Excavation works for Block 30 - (B1.31 23 16.01)-Z9-B30-EX | 2027-04-25 → 2027-06-28 (+64d) | 2027-05-04 → 2027-07-07 (+64d) |  |  |  |
| 199 | **RHD4-02-002-Block Works-EX-Z9-BLOCK-34** | 2027-03-30 → 2026-07-18 (-255d) | 2027-04-15 → 2027-06-28 (+74d) |  |  |  |
| RHD4CZ9B34EX1000 | Excavation works for Block 34 - (B1.31 23 16.01)-Z9-B34-EX(Completed) | 2027-03-30 → 2026-07-18 A (-255d) | 2027-04-15 → 2027-06-28 (+74d) |  | 0% → 79% |  |
| 200 | **RHD4-02-002-Block Works-EX-Z9-BLOCK-35** | 2027-03-30 → 2026-07-18 (-255d) | 2027-04-15 → 2026-08-03 (-255d) |  |  |  |
| RHD4CZ9B35EX1000 | Excavation works for Block 35 - (B1.31 23 16.01)-Z9-B35-EX(Completed) | 2027-03-30 → 2026-07-18 A (-255d) | 2027-04-15 → 2026-08-03 A (-255d) |  | 0% → 100% |  |
| 201 | **RHD4-02-002-Block Works-EX-Z9-BLOCK-36** | 2027-05-05 → 2027-07-08 (+64d) | 2027-05-09 → 2027-07-12 (+64d) |  |  |  |
| RHD4CZ9B36EX1000 | Excavation works for Block 36 - (B1.31 23 16.01)-Z9-B36-EX | 2027-05-05 → 2027-07-08 (+64d) | 2027-05-09 → 2027-07-12 (+64d) |  |  |  |
| 163 | **RHD4-02-002-Z4-Block Wokrs - Excavation** | 2027-03-23 → 2026-05-23 (-304d) | 2027-05-20 → 2027-08-14 (+86d) |  |  |  |
| 167 | **RHD4-02-002-Block Works-EX-Z4-BLOCK-09** | 2027-04-17 → 2026-05-23 (-329d) | 2027-05-03 → 2026-07-19 (-288d) |  |  |  |
| RHD4CZ4B09EX1000 | Excavation works for Block 09 - (B1.31 23 16.01)-Z4-B09-EX(Completed) | 2027-04-17 → 2026-05-23 A (-329d) | 2027-05-03 → 2026-07-19 A (-288d) |  | 0% → 100% |  |
| 166 | **RHD4-02-002-Block Works-EX-Z4-BLOCK-08** | 2027-03-24 → 2026-08-15 (-221d) | 2027-04-27 → 2027-07-29 (+93d) |  |  |  |
| RHD4CZ4B08EX1000 | Excavation works for Block 08 - Stage 1 - (B1.31 23 16.01)-Z4-B08-EX | 2027-03-24 → 2026-08-15 A (-221d) | 2027-04-10 → 2027-07-05 (+86d) |  | 0% → 63% |  |
| RHD4CZ4B08EX1001 | Excavation works for Block 08 - Stage 2 - (B1.31 23 16.01)-Z4-B08-EX | 2027-04-11 → 2027-07-06 (+86d) | 2027-04-27 → 2027-07-29 (+93d) | 15d → 21d |  |  |
| 165 | **RHD4-02-002-Block Works-EX-Z4-BLOCK-07** | 2027-03-30 → 2026-06-07 (-296d) | 2027-05-20 → 2027-07-21 (+62d) |  |  |  |
| RHD4CZ4B07EX1000 | Excavation works for Block 07 - Stage 1 - (B1.31 23 16.01)-Z4-B07-EX(Completed) | 2027-03-30 → 2026-06-07 A (-296d) | 2027-04-21 → 2026-08-03 A (-261d) |  | 0% → 100% |  |
| RHD4CZ4B07EX1001 | Excavation works for Block 07 - Stage 2 - (B1.31 23 16.01)-Z4-B07-EX | 2027-04-22 → 2027-06-28 (+67d) | 2027-05-20 → 2027-07-21 (+62d) |  |  |  |
| 164 | **RHD4-02-002-Block Works-EX-Z4-BLOCK-06** | 2027-03-30 → 2027-06-28 (+90d) | 2027-04-25 → 2027-08-14 (+111d) |  |  |  |
| RHD4CZ4B06EX1000 | Excavation works for Block 06 - Stage 1 - (B1.31 23 16.01)-Z4-B06-EX(Completed) | 2027-03-30 → 2027-06-28 (+90d) | 2027-04-10 → 2027-07-20 (+101d) | 10d → 20d |  |  |
| RHD4CZ4B06EX1001 | Excavation works for Block 06 - Stage 2 - (B1.31 23 16.01)-Z4-B06-EX | 2027-04-11 → 2027-07-21 (+101d) | 2027-04-25 → 2027-08-14 (+111d) | 13d → 21d |  |  |
| 168 | **RHD4-02-002-Block Works-EX-Z4-BLOCK-Z4** | 2027-03-23 → 2026-10-13 (-161d) | 2027-04-14 → 2027-08-07 (+115d) |  |  |  |
| RHD4CZ4BZ4EX1000 | Excavation works for Block BZ4 - Stage 1 - (B1.31 23 16.01)-Z4-BZ4-EX | 2027-03-23 → 2026-10-13 A (-161d) | 2027-04-03 → 2027-07-13 (+101d) | 10d → 21d | 0% → 20% |  |
| RHD4CZ4BZ4EX1001 | Excavation works for Block BZ4 - Stage 2 - (B1.31 23 16.01)-Z4-BZ4-EX | 2027-04-04 → 2027-07-13 (+100d) | 2027-04-14 → 2027-08-07 (+115d) | 10d → 21d |  |  |
| 154 | **RHD4-02-002-Z1-Block Wokrs - Excavation** | 2027-02-17 → 2026-08-15 (-186d) | 2027-04-27 → 2027-07-08 (+72d) |  |  |  |
| 155 | **RHD4-02-002-Block Works-EX-Z1-BLOCK-01** | 2027-02-17 → 2026-08-15 (-186d) | 2027-03-17 → 2027-07-08 (+113d) |  |  |  |
| RHD4CZ1B01EX1000 | Excavation works for Block 01 - (B1.31 23 16.01)-Z1-B01-EX | 2027-02-17 → 2026-08-15 A (-186d) | 2027-03-17 → 2027-07-08 (+113d) |  | 0% → 99% |  |
| 156 | **RHD4-02-002-Block Works-EX-Z1-BLOCK-02** | 2027-03-18 → 2026-08-22 (-208d) | 2027-04-10 → 2026-10-10 (-182d) |  |  |  |
| RHD4CZ1B02EX1000 | Excavation works for Block 02 - (B1.31 23 16.01)-Z1-B02-EX | 2027-03-18 → 2026-08-22 A (-208d) | 2027-04-10 → 2026-10-10 A (-182d) |  | 0% → 100% |  |
| 157 | **RHD4-02-002-Block Works-EX-Z1-BLOCK-03** | 2027-04-11 → 2026-08-29 (-225d) | 2027-04-27 → 2026-09-08 (-231d) |  |  |  |
| RHD4CZ1B03EX1000 | Excavation works for Block 03 - (B1.31 23 16.01)-Z1-B03-EX | 2027-04-11 → 2026-08-29 A (-225d) | 2027-04-27 → 2026-09-08 A (-231d) |  | 0% → 100% |  |
| 202 | **RHD4-02-002-Block Works - BF** | 2027-03-02 → 2026-03-15 (-352d) | 2027-08-05 → 2027-10-04 (+60d) |  |  |  |
| 224 | **RHD4-02-002-Z6-Block Works - Backfill** | 2027-03-30 → 2026-03-17 (-378d) | 2027-05-23 → 2027-06-29 (+37d) |  |  |  |
| 225 | **RHD4-02-002-Block Works - BF-Z6-BLOCK-15** | 2027-03-30 → 2026-03-28 (-367d) | 2027-04-06 → 2026-05-03 (-338d) |  |  |  |
| RHD4CZ6B15BF2000 | Backfill Layers works Using Dynamic Compaction Crane (RIC) for Block 15 - (B1.31 23 23.03)-Z6-B15-BF | 2027-03-30 → 2026-03-28 A (-367d) | 2027-04-06 → 2026-05-03 A (-338d) |  | 0% → 100% |  |
| 226 | **RHD4-02-002-Block Works - BF-Z6-BLOCK-16** | 2027-04-07 → 2026-03-17 (-386d) | 2027-04-15 → 2026-06-07 (-312d) |  |  |  |
| RHD4CZ6B16BF2000 | Backfill Layers works Using Dynamic Compaction Crane (RIC) for Block 16 - (B1.31 23 23.03)-Z6-B16-BF | 2027-04-07 → 2026-03-17 A (-386d) | 2027-04-15 → 2026-06-07 A (-312d) |  | 0% → 100% | resources Skilled labor [45.63 h]; Unskilled Labor [91.15 h]; Equipment Opreator [91.15 h]; RIC Machine [91.15 h]; Engineering fill using approved fill material placed in bulk and compacted by dynamic compaction method For Roads and Plots [41440.1 m3] → Skilled labor [45.6 h]; Unskilled Labor [91.15 h]; Equipment Opreator [91.15 h]; RIC Machine [91.15 h]; Engineering fill using approved fill material placed in bulk and compacted by dynamic compaction method For Roads and Plots [41440.1 m3] |
| 227 | **RHD4-02-002-Block Works - BF-Z6-BLOCK-17** | 2027-04-17 → 2026-03-17 (-396d) | 2027-04-25 → 2027-06-29 (+65d) |  |  |  |
| RHD4CZ6B17BF2000 | Backfill Layers works Using Dynamic Compaction Crane (RIC) for Block 17 - (B1.31 23 23.03)-Z6-B17-BF(Completed) | 2027-04-17 → 2026-03-17 A (-396d) | 2027-04-25 → 2027-06-29 (+65d) |  | 0% → 79% | resources Skilled labor [186.44 h]; Unskilled Labor [372.78 h]; Equipment Opreator [372.78 h]; RIC Machine [372.78 h]; Engineering fill using approved fill material placed in bulk and compacted by dynamic compaction method For Roads and Plots [206000 m3] → Skilled labor [186.44 h]; Unskilled Labor [372.8 h]; Equipment Opreator [372.8 h]; RIC Machine [372.8 h]; Engineering fill using approved fill material placed in bulk and compacted by dynamic compaction method For Roads and Plots [206000 m3] |
| 228 | **RHD4-02-002-Block Works - BF-Z6-BLOCK-Z6** | 2027-04-26 → 2026-03-23 (-399d) | 2027-05-23 → 2026-06-06 (-351d) |  |  |  |
| RHD4CZ6BZ6BF2000 | Backfill Layers works Using Dynamic Compaction Crane (RIC) for Block BZ6 - (B1.31 23 23.03)-Z6-BZ6-BF | 2027-04-26 → 2026-03-23 A (-399d) | 2027-05-23 → 2026-06-06 A (-351d) |  | 0% → 100% |  |
| 237 | **RHD4-02-002-Z8-Block Works - Backfill** | 2027-04-26 → 2026-09-21 (-217d) | 2027-06-12 → 2027-10-04 (+114d) |  |  |  |
| 238 | **RHD4-02-002-Block Works - BF-Z8-BLOCK-25** | 2027-04-26 → 2026-09-21 (-217d) | 2027-05-03 → 2027-07-17 (+75d) |  |  |  |
| RHD4CZ8B25BF2000 | Backfill Layers works Using Dynamic Compaction Crane (RIC) for Block 25 - (B1.31 23 23.03)-Z8-B25-BF | 2027-04-26 → 2026-09-21 A (-217d) | 2027-05-03 → 2027-07-17 (+75d) |  | 0% → 84% |  |
| 239 | **RHD4-02-002-Block Works - BF-Z8-BLOCK-26** | 2027-05-04 → 2027-08-22 (+110d) | 2027-05-05 → 2027-08-24 (+111d) |  |  |  |
| RHD4CZ8B26BF2000 | Backfill Layers works Using Dynamic Compaction Crane (RIC) for Block 26 - (B1.31 23 23.03)-Z8-B26-BF | 2027-05-04 → 2027-08-22 (+110d) | 2027-05-05 → 2027-08-24 (+111d) |  |  |  |
| 240 | **RHD4-02-002-Block Works - BF-Z8-BLOCK-27** | 2027-05-06 → 2027-08-24 (+110d) | 2027-05-19 → 2027-09-02 (+106d) |  |  |  |
| RHD4CZ8B27BF2000 | Backfill Layers works Using Dynamic Compaction Crane (RIC) for Block 27 - (B1.31 23 23.03)-Z8-B27-BF | 2027-05-06 → 2027-08-24 (+110d) | 2027-05-19 → 2027-09-02 (+106d) |  |  |  |
| 241 | **RHD4-02-002-Block Works - BF-Z8-BLOCK-28** | 2027-05-20 → 2027-09-02 (+105d) | 2027-06-01 → 2027-09-22 (+113d) |  |  |  |
| RHD4CZ8B28BF2000 | Backfill Layers works Using Dynamic Compaction Crane (RIC) for Block 28 - (B1.31 23 23.03)-Z8-B28-BF | 2027-05-20 → 2027-09-02 (+105d) | 2027-06-01 → 2027-09-22 (+113d) | 11d → 17d |  |  |
| 242 | **RHD4-02-002-Block Works - BF-Z8-BLOCK-29** | 2027-06-02 → 2027-09-22 (+112d) | 2027-06-12 → 2027-10-04 (+114d) |  |  |  |
| RHD4CZ8B29BF2000 | Backfill Layers works Using Dynamic Compaction Crane (RIC) for Block 29 - (B1.31 23 23.03)-Z8-B29-BF | 2027-06-02 → 2027-09-22 (+112d) | 2027-06-12 → 2027-10-04 (+114d) |  |  |  |

| ID | Task | Start | Finish | Duration | Complete | Other |
| --- | --- | --- | --- | --- | --- | --- |
| 243 | **RHD4-02-002-Z9-Block Works - Backfill** | 2027-03-31 → 2026-08-04 (-239d) | 2027-06-22 → 2027-09-23 (+93d) |  |  |  |
| 244 | **RHD4-02-002-Block Works - BF-Z9-BLOCK-30** | 2027-03-31 → 2026-08-05 (-238d) | 2027-04-11 → 2027-07-13 (+93d) |  |  |  |
| RHD4CZ9B30BF2000 | Backfill Layers works Using Dynamic Compaction Crane (RIC) for Block 30 - (B1.31 23 23.03)-Z9-B30-BF | 2027-03-31 → 2026-08-05 A (-238d) | 2027-04-11 → 2027-07-13 (+93d) |  | 0% → 12% |  |
| 245 | **RHD4-02-002-Block Works - BF-Z9-BLOCK-31** | 2027-04-12 → 2026-08-09 (-246d) | 2027-04-13 → 2027-07-15 (+93d) |  |  |  |
| RHD4CZ9B31BF2000 | Backfill Layers works Using Dynamic Compaction Crane (RIC) for Block 31 - (B1.31 23 23.03)-Z9-B31-BF | 2027-04-12 → 2026-08-09 A (-246d) | 2027-04-13 → 2027-07-15 (+93d) |  | 0% → 90% |  |
| 246 | **RHD4-02-002-Block Works - BF-Z9-BLOCK-32** | 2027-04-25 → 2026-08-11 (-257d) | 2027-04-29 → 2027-07-21 (+83d) |  |  |  |
| RHD4CZ9B32BF2000 | Backfill Layers works Using Dynamic Compaction Crane (RIC) for Block 32 - (B1.31 23 23.03)-Z9-B32-BF | 2027-04-25 → 2026-08-11 A (-257d) | 2027-04-29 → 2027-07-21 (+83d) |  | 0% → 90% |  |
| 247 | **RHD4-02-002-Block Works - BF-Z9-BLOCK-33** | 2027-05-01 → 2026-08-09 (-265d) | 2027-05-22 → 2026-09-30 (-234d) |  |  |  |
| RHD4CZ9B33BF2000 | Backfill Layers works Using Dynamic Compaction Crane (RIC) for Block 33 - (B1.31 23 23.03)-Z9-B33-BF | 2027-05-01 → 2026-08-09 A (-265d) | 2027-05-22 → 2026-09-30 A (-234d) |  | 0% → 100% |  |
| 248 | **RHD4-02-002-Block Works - BF-Z9-BLOCK-34** | 2027-05-23 → 2026-08-08 (-288d) | 2027-06-02 → 2027-08-02 (+61d) |  |  |  |
| RHD4CZ9B34BF2000 | Backfill Layers works Using Dynamic Compaction Crane (RIC) for Block 34 - (B1.31 23 23.03)-Z9-B34-BF | 2027-05-23 → 2026-08-08 A (-288d) | 2027-06-02 → 2027-08-02 (+61d) |  | 0% → 26% |  |
| 249 | **RHD4-02-002-Block Works - BF-Z9-BLOCK-35** | 2027-06-03 → 2026-08-04 (-303d) | 2027-06-15 → 2027-08-15 (+61d) |  |  |  |
| RHD4CZ9B35BF2000 | Backfill Layers works Using Dynamic Compaction Crane (RIC) for Block 35 - (B1.31 23 23.03)-Z9-B35-BF | 2027-06-03 → 2026-08-04 A (-303d) | 2027-06-15 → 2027-08-15 (+61d) |  | 0% → 7% |  |
| 250 | **RHD4-02-002-Block Works - BF-Z9-BLOCK-36** | 2027-06-16 → 2026-08-04 (-316d) | 2027-06-22 → 2027-09-23 (+93d) |  |  |  |
| RHD4CZ9B36BF2000 | Backfill Layers works Using Dynamic Compaction Crane (RIC) for Block 36 - (B1.31 23 23.03)-Z9-B36-BF | 2027-06-16 → 2026-08-04 A (-316d) | 2027-06-22 → 2027-09-23 A (+93d) |  | 0% → 100% |  |
| 229 | **RHD4-02-002-Z7-Block Works - Backfill** | 2027-03-02 → 2026-04-14 (-322d) | 2027-06-16 → 2027-07-28 (+42d) |  |  |  |
| 230 | **RHD4-02-002-Block Works - BF-Z7-BLOCK-18** | 2027-03-02 → 2026-05-02 (-304d) | 2027-03-17 → 2026-05-13 (-308d) |  |  |  |
| RHD4CZ7B18BF2000 | Backfill Layers works Using Dynamic Compaction Crane (RIC) for Block 18 - (B1.31 23 23.03)-Z7-B18-BF | 2027-03-02 → 2026-05-02 A (-304d) | 2027-03-17 → 2026-05-13 A (-308d) |  | 0% → 100% |  |
| 231 | **RHD4-02-002-Block Works - BF-Z7-BLOCK-19** | 2027-03-18 → 2026-04-23 (-329d) | 2027-04-11 → 2026-06-06 (-309d) |  |  |  |
| RHD4CZ7B19BF2000 | Backfill Layers works Using Dynamic Compaction Crane (RIC) for Block 19 - (B1.31 23 23.03)-Z7-B19-BF | 2027-03-18 → 2026-04-23 A (-329d) | 2027-04-11 → 2026-06-06 A (-309d) |  | 0% → 100% |  |
| 232 | **RHD4-02-002-Block Works - BF-Z7-BLOCK-20** | 2027-04-12 → 2026-04-14 (-363d) | 2027-05-03 → 2026-07-04 (-303d) |  |  |  |
| RHD4CZ7B20BF2000 | Backfill Layers works Using Dynamic Compaction Crane (RIC) for Block 20 - (B1.31 23 23.03)-Z7-B20-BF | 2027-04-12 → 2026-04-14 A (-363d) | 2027-05-03 → 2026-07-04 A (-303d) |  | 0% → 100% | resources Skilled labor [66 h]; Unskilled Labor [131.99 h]; Equipment Opreator [131.99 h]; RIC Machine [131.99 h]; Engineering fill using approved fill material placed in bulk and compacted by dynamic compaction method For Roads and Plots [64145.4 m3] → Skilled labor [66 h]; Unskilled Labor [132 h]; Equipment Opreator [132 h]; RIC Machine [132 h]; Engineering fill using approved fill material placed in bulk and compacted by dynamic compaction method For Roads and Plots [64145.4 m3] |
| 233 | **RHD4-02-002-Block Works - BF-Z7-BLOCK-21** | 2027-05-04 → 2026-07-16 (-292d) | 2027-05-26 → 2026-08-03 (-296d) |  |  |  |
| RHD4CZ7B21BF2000 | Backfill Layers works Using Dynamic Compaction Crane (RIC) for Block 21 - (B1.31 23 23.03)-Z7-B21-BF(Completed) | 2027-05-04 → 2026-07-16 A (-292d) | 2027-05-26 → 2026-08-03 A (-296d) |  | 0% → 100% |  |
| 234 | **RHD4-02-002-Block Works - BF-Z7-BLOCK-22** | 2027-05-27 → 2026-09-20 (-249d) | 2027-06-16 → 2026-10-11 (-248d) |  |  |  |
| RHD4CZ7B22BF2000 | Backfill Layers works Using Dynamic Compaction Crane (RIC) for Block 22 - (B1.31 23 23.03)-Z7-B22-BF | 2027-05-27 → 2026-09-20 A (-249d) | 2027-06-16 → 2026-10-11 A (-248d) |  | 0% → 100% |  |
| 235 | **RHD4-02-002-Block Works - BF-Z7-BLOCK-23** | 2027-06-14 → 2026-10-01 (-256d) | 2027-06-16 → 2027-07-10 (+24d) |  |  |  |
| RHD4CZ7B23BF2000 | Backfill Layers works Using Dynamic Compaction Crane (RIC) for Block 23 - (B1.31 23 23.03)-Z7-B23-BF | 2027-06-14 → 2026-10-01 A (-256d) | 2027-06-16 → 2027-07-10 (+24d) |  | 0% → 67% |  |
| 236 | **RHD4-02-002-Block Works - BF-Z7-BLOCK-24** | 2027-04-11 → 2027-07-04 (+84d) | 2027-05-04 → 2027-07-28 (+85d) |  |  |  |
| RHD4CZ7B24BF2000 | Backfill Layers works Using Dynamic Compaction Crane (RIC) for Block 24 - (B1.31 23 23.03)-Z7-B24-BF | 2027-04-11 → 2027-07-04 (+84d) | 2027-05-04 → 2027-07-28 (+85d) |  |  |  |
| 218 | **RHD4-02-002-Z5-Block Works - Backfill** | 2027-03-07 → 2026-03-15 (-357d) | 2027-05-08 → 2027-06-30 (+53d) |  |  |  |
| 219 | **RHD4-02-002-Block Works - BF-Z5-BLOCK-10** | 2027-04-07 → 2026-03-23 (-380d) | 2027-04-17 → 2026-07-19 (-272d) |  |  |  |
| RHD4CZ5B10BF2000 | Backfill Layers works Using Dynamic Compaction Crane (RIC) for Block 10 - (B1.31 23 23.03)-Z5-B10-BF | 2027-04-07 → 2026-03-23 A (-380d) | 2027-04-17 → 2026-07-19 A (-272d) |  | 0% → 100% | resources Skilled labor [6.86 h]; Unskilled Labor [13.61 h]; Equipment Opreator [13.61 h]; RIC Machine [13.61 h]; Engineering fill using approved fill material placed in bulk and compacted by dynamic compaction method For Roads and Plots [6616.97 m3] → Skilled labor [6.86 h]; Unskilled Labor [13.6 h]; Equipment Opreator [13.6 h]; RIC Machine [13.6 h]; Engineering fill using approved fill material placed in bulk and compacted by dynamic compaction method For Roads and Plots [6616.97 m3] |
| 220 | **RHD4-02-002-Block Works - BF-Z5-BLOCK-11** | 2027-03-07 → 2026-03-15 (-357d) | 2027-03-17 → 2026-07-18 (-242d) |  |  |  |
| RHD4CZ5B11BF2000 | Backfill Layers works Using Dynamic Compaction Crane (RIC) for Block 11 - (B1.31 23 23.03)-Z5-B11-BF | 2027-03-07 → 2026-03-15 A (-357d) | 2027-03-17 → 2026-07-18 A (-242d) |  | 0% → 100% |  |
| 221 | **RHD4-02-002-Block Works - BF-Z5-BLOCK-12** | 2027-03-18 → 2026-03-15 (-368d) | 2027-03-30 → 2026-08-04 (-238d) |  |  |  |
| RHD4CZ5B12BF2000 | Backfill Layers works Using Dynamic Compaction Crane (RIC) for Block 12 - (B1.31 23 23.03)-Z5-B12-BF(Completed) | 2027-03-18 → 2026-03-15 A (-368d) | 2027-03-30 → 2026-08-04 A (-238d) |  | 0% → 100% |  |
| 222 | **RHD4-02-002-Block Works - BF-Z5-BLOCK-13** | 2027-04-18 → 2026-03-28 (-386d) | 2027-04-27 → 2026-07-19 (-282d) |  |  |  |
| RHD4CZ5B13BF2000 | Backfill Layers works Using Dynamic Compaction Crane (RIC) for Block 13 - (B1.31 23 23.03)-Z5-B13-BF | 2027-04-18 → 2026-03-28 A (-386d) | 2027-04-27 → 2026-07-19 A (-282d) |  | 0% → 100% |  |
| 223 | **RHD4-02-002-Block Works - BF-Z5-BLOCK-14** | 2027-04-28 → 2026-03-24 (-400d) | 2027-05-08 → 2027-06-30 (+53d) |  |  |  |
| RHD4CZ5B14BF2000 | Backfill Layers works Using Dynamic Compaction Crane (RIC) for Block 14 - (B1.31 23 23.03)-Z5-B14-BF | 2027-04-28 → 2026-03-24 A (-400d) | 2027-05-08 → 2027-06-30 (+53d) |  | 0% → 71% |  |
| 207 | **RHD4-02-002-Z2-Block Works - Backfill** | 2027-05-09 → 2026-08-09 (-273d) | 2027-06-22 → 2027-07-05 (+13d) |  |  |  |
| 208 | **RHD4-02-002-Block Works - BF-Z2-BLOCK-04** | 2027-05-09 → 2026-08-09 (-273d) | 2027-05-23 → 2027-07-05 (+43d) |  |  |  |
| RHD4CZ2B04BF2000 | Backfill Layers works Using Dynamic Compaction Crane (RIC) for Block 04 - (B1.31 23 23.03)-Z2-B04-BF | 2027-05-09 → 2026-08-09 A (-273d) | 2027-05-23 → 2027-07-05 (+43d) |  | 0% → 65% |  |
| 209 | **RHD4-02-002-Block Works - BF-Z2-BLOCK-05** | 2027-05-24 → 2026-08-26 (-271d) | 2027-06-22 → 2026-09-28 (-267d) |  |  |  |
| RHD4CZ2B05BF2000 | Backfill Layers works Using Dynamic Compaction Crane (RIC) for Block 05 - Stage 1 - (B1.31 23 23.03)-Z2-B05-BF | 2027-05-24 → 2026-08-26 A (-271d) | 2027-05-29 → 2026-08-31 A (-271d) |  | 0% → 100% |  |
| RHD4CZ2B05BF2001 | Backfill Layers works Using Dynamic Compaction Crane (RIC) for Block 05 - Stage 2 - (B1.31 23 23.03)-Z2-B05-BF | 2027-05-30 → 2026-09-01 A (-271d) | 2027-06-22 → 2026-09-28 A (-267d) |  | 0% → 100% |  |
| 212 | **RHD4-02-002-Z4-Block Works - Backfill** | 2027-04-17 → 2026-05-24 (-328d) | 2027-08-05 → 2027-09-20 (+46d) |  |  |  |
| 214 | **RHD4-02-002-Block Works - BF-Z4-BLOCK-07** | 2027-07-11 → 2027-08-22 (+42d) | 2027-08-05 → 2027-09-16 (+42d) |  |  |  |
| RHD4CZ4B07BF2000 | Backfill Layers works Using Dynamic Compaction Crane (RIC) for Block 07 - (B1.31 23 23.03)-Z4-B07-BF | 2027-07-11 → 2027-08-22 (+42d) | 2027-07-12 → 2027-08-23 (+42d) |  |  |  |
| RHD4CZ4B07BF4000 | Soil improvement works by Dynamic Compaction (DC) for Block 07 - Stage 1 - (B1.31 23 23.23.01)-Z4-B07-BF | 2027-07-13 → 2027-08-24 (+42d) | 2027-08-05 → 2027-09-16 (+42d) |  |  |  |
| RHD4CZ4B07BF4001 | Soil improvement works by Dynamic Compaction (DC) for Block 07 - Stage 2 - (B1.31 23 23.23.01)-Z4-B07-BF | 2027-07-20 → 2027-08-24 (+35d) | 2027-08-05 → 2027-09-16 (+42d) | 15d → 21d |  |  |
| 215 | **RHD4-02-002-Block Works - BF-Z4-BLOCK-08** | 2027-06-03 → 2026-09-26 (-250d) | 2027-07-12 → 2027-08-23 (+42d) |  |  |  |
| RHD4CZ4B08BF2000 | Backfill Layers works Using Dynamic Compaction Crane (RIC) for Block 08 - (B1.31 23 23.03)-Z4-B08-BF | 2027-06-03 → 2026-09-26 A (-250d) | 2027-06-24 → 2027-07-27 (+33d) |  | 0% → 53% |  |
| RHD4CZ4B08BF4000 | Soil improvement works by Dynamic Compaction (DC) for Block 08 - Stage 1 - (B1.31 23 23.23.01)-Z4-B08-BF | 2027-06-26 → 2027-07-31 (+35d) | 2027-07-12 → 2027-08-23 (+42d) | 15d → 21d |  |  |
| 216 | **RHD4-02-002-Block Works - BF-Z4-BLOCK-09** | 2027-04-17 → 2026-05-24 (-328d) | 2027-06-02 → 2026-09-28 (-247d) |  |  |  |
| RHD4CZ4B09BF2000 | Backfill Layers works Using Dynamic Compaction Crane (RIC) for Block 09 - Stage 1 - (B1.31 23 23.03)-Z4-B09-BF(Completed | 2027-04-17 → 2026-05-24 A (-328d) | 2027-04-28 → 2026-08-03 A (-268d) |  | 0% → 100% |  |
| RHD4CZ4B09BF2001 | Backfill Layers works Using Dynamic Compaction Crane (RIC) for Block 09 - Stage 2 - (B1.31 23 23.03)-Z4-B09-BF | 2027-05-24 → 2026-08-13 A (-284d) | 2027-06-02 → 2026-09-28 A (-247d) |  | 0% → 100% |  |
| 217 | **RHD4-02-002-Block Works - BF-Z4-BLOCK-Z4** | 2027-05-10 → 2026-09-24 (-228d) | 2027-06-22 → 2027-09-20 (+90d) |  |  |  |
| RHD4CZ4BZ4BF2000 | Backfill Layers works Using Dynamic Compaction Crane (RIC) for Block BZ4 - (B1.31 23 23.03)-Z4-BZ4-BF | 2027-05-10 → 2026-09-24 A (-228d) | 2027-05-11 → 2026-10-08 A (-215d) |  | 0% → 100% |  |
| RHD4CZ4BZ4BF4000 | Soil improvement works by Dynamic Compaction (DC) for Block BZ4 - Stage 1 - (B1.31 23 23.23.01)-Z4-BZ4-BF | 2027-05-12 → 2027-08-15 (+95d) | 2027-06-03 → 2027-09-01 (+90d) |  |  |  |
| RHD4CZ4BZ4BF4001 | Soil improvement works by Dynamic Compaction (DC) for Block BZ4 - Stage 2 - (B1.31 23 23.23.01)-Z4-BZ4-BF | 2027-06-05 → 2027-09-02 (+89d) | 2027-06-22 → 2027-09-20 (+90d) |  |  |  |
| 1 | **RHD4-02-002-Block Works - BF-Z4-BLOCK-06** | 2027-04-20 → 2027-07-11 (+82d) | 2027-05-09 → 2027-07-29 (+81d) |  |  |  |
| RHD4CZ4B06BF4000 | Soil improvement works by Dynamic Compaction (DC) for Block 06 - Stage 1 - (B1.31 23 23.23.01)-Z4-B06-BF | 2027-04-20 → 2027-07-11 (+82d) | 2027-05-09 → 2027-07-29 (+81d) |  |  |  |
| 203 | **RHD4-02-002-Z1-Block Works - Backfill** | 2027-04-11 → 2026-08-25 (-229d) | 2027-06-12 → 2027-07-12 (+30d) |  |  |  |
| 204 | **RHD4-02-002-Block Works - BF-Z1-BLOCK-01** | 2027-04-20 → 2026-08-25 (-238d) | 2027-05-13 → 2027-07-12 (+60d) |  |  |  |
| RHD4CZ1B01BF2000 | Backfill Layers works Using Dynamic Compaction Crane (RIC) for Block 01 - (B1.31 23 23.03)-Z1-B01-BF | 2027-04-20 → 2026-08-25 A (-238d) | 2027-05-13 → 2027-07-12 (+60d) |  | 0% → 67% |  |
| 205 | **RHD4-02-002-Block Works - BF-Z1-BLOCK-02** | 2027-04-11 → 2026-08-29 (-225d) | 2027-04-19 → 2027-07-10 (+82d) |  |  |  |
| RHD4CZ1B02BF2000 | Backfill Layers works Using Dynamic Compaction Crane (RIC) for Block 02 - (B1.31 23 23.03)-Z1-B02-BF | 2027-04-11 → 2026-08-29 A (-225d) | 2027-04-19 → 2027-07-10 (+82d) |  | 0% → 75% |  |
| 206 | **RHD4-02-002-Block Works - BF-Z1-BLOCK-03** | 2027-05-19 → 2026-08-31 (-261d) | 2027-06-12 → 2026-09-05 (-280d) |  |  |  |

| ID | Task | Start | Finish | Duration | Complete | Other |
| --- | --- | --- | --- | --- | --- | --- |
| RHD4CZ1B03BF2000 | Backfill Layers works Using Dynamic Compaction Crane (RIC) for Block 03 - (B1.31 23 23.03)-Z1-B03-BF | 2027-05-19 → 2026-08-31 A (-261d) | 2027-06-12 → 2026-09-05 A (-280d) |  | 0% → 100% | resources Skilled labor [120.01 h]; Unskilled Labor [239.91 h]; Equipment Opreator [239.91 h]; RIC Machine [239.91 h]; Engineering fill using approved fill material placed in bulk and compacted by dynamic compaction method For Roads and Plots [123923 m3] → Skilled labor [120 h]; Unskilled Labor [239.91 h]; Equipment Opreator [239.91 h]; RIC Machine [239.91 h]; Engineering fill using approved fill material placed in bulk and compacted by dynamic compaction method For Roads and Plots [123923 m3] |
| 210 | **RHD4-02-002-Z3-Block Works - Backfill** | 2027-06-17 → 2026-06-04 (-378d) | 2027-07-26 → 2026-08-13 (-347d) |  |  |  |
| 211 | **RHD4-02-002-Block Works - BF-Z3-BLOCK-Z3** | 2027-06-17 → 2026-06-04 (-378d) | 2027-07-26 → 2026-08-13 (-347d) |  |  |  |
| RHD4CZ3BZ3BF2000 | Backfill Layers works Using Dynamic Compaction Crane (RIC) for Block BZ3 - Stage 1 - (B1.31 23 23.03)-Z3-BZ3-BF | 2027-06-17 → 2026-06-04 A (-378d) | 2027-07-04 → 2026-07-20 A (-349d) |  | 0% → 100% |  |
| RHD4CZ3BZ3BF2001 | Backfill Layers works Using Dynamic Compaction Crane (RIC) for Block BZ3 - Stage 2 - (B1.31 23 23.03)-Z3-BZ3-BF | 2027-07-05 → 2026-07-23 A (-347d) | 2027-07-26 → 2026-08-13 A (-347d) |  | 0% → 100% |  |
| 251 | **RHD4-02-002-Road Works - RW** |  | 2027-08-04 → 2028-02-15 (+195d) |  |  |  |
| 270 | **RHD4-02-002-Z5-Road Works** | 2025-12-24 → 2025-12-28 (+4d) | 2026-05-25 → 2027-01-11 (+231d) |  |  |  |
| 271 | **RHD4-02-002-Road Works - RW-Z5-(RD-A-1 /4)** | 2025-12-24 → 2025-12-28 (+4d) | 2026-02-21 → 2026-11-25 (+277d) |  |  |  |
| RHD4CZ5A014RW1000 | Excavation works for Road (RD-A-1 /4) - (B1.31 23 16.01)-Z5-A014-RW- Stage 1 | 2025-12-24 → 2025-12-28 A (+4d) | 2026-01-01 → 2026-02-15 A (+45d) |  | 0% → 100% |  |
| RHD4CZ5A014RW2000 | Backfill Layers works Using Dynamic Compaction Crane (RIC) for Road (RD-A-1 /4) - Stage 1 - (B1.31 23 23.03)-Z5-A014-RW | 2026-01-03 A | 2026-01-14 → 2026-04-17 A (+93d) |  | 0% → 100% | resources Skilled labor [55.21 h]; Unskilled Labor [110.54 h]; Equipment Opreator [110.54 h]; RIC Machine [110.54 h]; Engineering fill using approved fill material placed in bulk and compacted by dynamic compaction method For Roads and Plots [40507.3 m3] → Skilled labor [55.2 h]; Unskilled Labor [110.54 h]; Equipment Opreator [110.54 h]; RIC Machine [110.54 h]; Engineering fill using approved fill material placed in bulk and compacted by dynamic compaction method For Roads and Plots [40507.3 m3] |
| RHD4CZ5A014RW1001 | Excavation works for Road (RD-A-1 /4) - (B1.31 23 16.01)-Z5-A014-RW- Stage 2 | 2026-01-03 → 2026-01-27 A (+24d) | 2026-01-21 → 2026-02-10 A (+20d) |  | 0% → 100% |  |
| RHD4CZ5A014RW2001 | Backfill Layers works Using Dynamic Compaction Crane (RIC) for Road (RD-A-1 /4) - Stage 2 - (B1.31 23 23.03)-Z5-A014-RW | 2026-01-22 → 2026-02-16 A (+25d) | 2026-02-03 → 2026-02-19 A (+16d) |  | 0% → 100% | resources Skilled labor [55.21 h]; Unskilled Labor [110.54 h]; Equipment Opreator [110.54 h]; RIC Machine [110.54 h]; Engineering fill using approved fill material placed in bulk and compacted by dynamic compaction method For Roads and Plots [40507.3 m3] → Skilled labor [55.2 h]; Unskilled Labor [110.54 h]; Equipment Opreator [110.54 h]; RIC Machine [110.54 h]; Engineering fill using approved fill material placed in bulk and compacted by dynamic compaction method For Roads and Plots [40507.3 m3] |
| RHD4CZ5A014RW3000 | Backfill Layers works using Improved fill Material for Road (RD-A-1 /4) - Stage 1 - (B1.31 23 23.01)-Z5-A014-RW | 2026-01-15 → 2026-11-03 (+292d) | 2026-01-20 → 2026-11-08 (+292d) |  |  |  |
| RHD4CZ5A014RW3001 | Backfill Layers works using Improved fill Material for Road (RD-A-1 /4) - Stage 2 - (B1.31 23 23.01)-Z5-A014-RW | 2026-02-04 → 2026-11-09 (+278d) | 2026-02-09 → 2026-11-14 (+278d) |  |  |  |
| RHD4CZ5A014RW3002 | Backfill Layers works using Improved fill Material for Road (RD-A-1 /4) - Stage 3 - (B1.31 23 23.01)-Z5-A014-RW | 2026-02-10 → 2026-11-15 (+278d) | 2026-02-15 → 2026-11-19 (+277d) |  |  |  |
| RHD4CZ5A014RW3003 | Backfill Layers works using Improved fill Material for Road (RD-A-1 /4) - Stage 4 - (B1.31 23 23.01)-Z5-A014-RW | 2026-02-16 → 2026-11-21 (+278d) | 2026-02-21 → 2026-11-25 (+277d) |  |  |  |
| 272 | **RHD4-02-002-Road Works - RW-Z5-(RD-C-5 /1)** |  | 2026-02-19 → 2026-11-16 (+270d) |  |  |  |
| RHD4CZ5C051RW1000 | Excavation works for Road (RD-C-5 /1) - (B1.31 23 16.01)-Z5-C051-RW | 2026-01-03 A | 2026-01-11 → 2026-02-23 A (+43d) |  | 0% → 100% | resources Skilled labor [45.74 h]; Unskilled Labor [91.37 h]; Equipment Opreator [822.66 h]; Excavator-Poclain [91.37 h]; Water Truck [91.37 h]; Bulldozer/Dozer [91.37 h]; Loader [182.85 h]; Dump Truck [365.59 h]; Excavation in all types of soil to the required depth includes removal of waste material Including Excavation for Roads and Site [23484.2 m3] → Skilled labor [45.74 h]; Unskilled Labor [91.37 h]; Equipment Opreator [822.66 h]; Excavator-Poclain [91.37 h]; Water Truck [91.37 h]; Bulldozer/Dozer [91.37 h]; Loader [182.85 h]; Dump Truck [365.6 h]; Excavation in all types of soil to the required depth includes removal of waste material Including Excavation for Roads and Site [23484.2 m3] |
| RHD4CZ5C051RW2000 | Backfill Layers works Using Dynamic Compaction Crane (RIC) for Road (RD-C-5 /1) - (B1.31 23 23.03)-Z5-C051-RW | 2026-02-04 A | 2026-02-05 → 2026-08-22 A (+198d) |  | 0% → 100% | resources Skilled labor [3.59 h]; Unskilled Labor [7.19 h]; Equipment Opreator [7.19 h]; RIC Machine [7.19 h]; Engineering fill using approved fill material placed in bulk and compacted by dynamic compaction method For Roads and Plots [2004.5 m3] → Skilled labor [3.59 h]; Unskilled Labor [7.2 h]; Equipment Opreator [7.2 h]; RIC Machine [7.2 h]; Engineering fill using approved fill material placed in bulk and compacted by dynamic compaction method For Roads and Plots [2004.5 m3] |
| RHD4CZ5C051RW3000 | Backfill Layers works using Improved fill Material for Road (RD-C-5 /1) - (B1.31 23 23.01)-Z5-C051-RW | 2026-02-07 → 2026-11-03 (+269d) | 2026-02-19 → 2026-11-16 (+270d) |  |  |  |
| 273 | **RHD4-02-002-Road Works - RW-Z5-(RD-C-6 /1)** | 2026-01-12 → 2026-02-10 (+29d) | 2026-03-28 → 2026-12-19 (+266d) |  |  |  |
| RHD4CZ5C061RW1000 | Excavation works for Road (RD-C-6 /1) - (B1.31 23 16.01)-Z5-C061-RW | 2026-01-12 → 2026-02-10 A (+29d) | 2026-01-13 → 2026-02-19 A (+37d) |  | 0% → 100% |  |
| RHD4CZ5C061RW2000 | Backfill Layers works Using Dynamic Compaction Crane (RIC) for Road (RD-C-6 /1) - (B1.31 23 23.03)-Z5-C061-RW | 2026-02-07 → 2026-02-12 A (+5d) | 2026-02-09 → 2026-02-19 A (+10d) |  | 0% → 100% |  |
| RHD4CZ5C061RW3000 | Backfill Layers works using Improved fill Material for Road (RD-C-6 /1) - (B1.31 23 23.01)-Z5-C061-RW | 2026-02-21 → 2026-11-17 (+269d) | 2026-03-28 → 2026-12-19 (+266d) |  |  |  |
| 274 | **RHD4-02-002-Road Works - RW-Z5-(RD-L-16)** |  | 2026-04-13 → 2027-01-04 (+266d) |  |  |  |
| RHD4CZ5L016RW1000 | Excavation works for Road (RD-L-16) - Stage 1 - (B1.31 23 16.01)-Z5-L016-RW | 2026-01-14 A | 2026-03-04 → 2026-04-27 A (+54d) |  | 0% → 100% |  |
| RHD4CZ5L016RW1001 | Excavation works for Road (RD-L-16) - Stage 2 - (B1.31 23 16.01)-Z5-L016-RW | 2026-03-05 → 2026-03-08 A (+3d) | 2026-03-14 → 2026-03-18 A (+4d) |  | 0% → 100% |  |
| RHD4CZ5L016RW2000 | Backfill Layers works Using Dynamic Compaction Crane (RIC) for Road (RD-L-16) - (B1.31 23 23.03)-Z5-L016-RW | 2026-03-15 A | 2026-03-17 → 2026-11-03 (+231d) |  | 0% → 78% | resources Skilled labor [13.61 h]; Unskilled Labor [27.23 h]; Equipment Opreator [27.23 h]; RIC Machine [27.23 h]; Engineering fill using approved fill material placed in bulk and compacted by dynamic compaction method For Roads and Plots [12970.3 m3] → Skilled labor [13.6 h]; Unskilled Labor [27.2 h]; Equipment Opreator [27.2 h]; RIC Machine [27.2 h]; Engineering fill using approved fill material placed in bulk and compacted by dynamic compaction method For Roads and Plots [12970.3 m3] |
| RHD4CZ5L016RW3000 | Backfill Layers works using Improved fill Material for Road (RD-L-16) - (B1.31 23 23.01)-Z5-L016-RW | 2026-03-29 → 2026-12-20 (+266d) | 2026-04-13 → 2027-01-04 (+266d) |  |  |  |
| 275 | **RHD4-02-002-Road Works - RW-Z5-(RD-L-7)** | 2026-03-05 → 2026-03-11 (+6d) | 2026-04-27 → 2026-12-05 (+222d) |  |  |  |
| RHD4CZ5L07RW1000 | Excavation works for Road (RD-L-7) - Stage 1 - (B1.31 23 16.01)-Z5-L07-RW | 2026-03-05 → 2026-03-11 A (+6d) | 2026-03-28 → 2026-04-02 A (+5d) |  | 0% → 100% |  |
| RHD4CZ5L07RW1001 | Excavation works for Road (RD-L-7) - Stage 2 - (B1.31 23 16.01)-Z5-L07-RW | 2026-03-29 → 2026-03-11 A (-18d) | 2026-04-18 → 2026-11-26 (+222d) |  | 0% → 94% |  |
| RHD4CZ5L07RW2000 | Backfill Layers works Using Dynamic Compaction Crane (RIC) for Road (RD-L-7) - (B1.31 23 23.03)-Z5-L07-RW | 2026-03-29 → 2026-03-26 A (-3d) | 2026-04-06 → 2026-03-31 A (-6d) |  | 0% → 100% |  |
| RHD4CZ5L07RW3000 | Backfill Layers works using Improved fill Material for Road (RD-L-7) - (B1.31 23 23.01)-Z5-L07-RW | 2026-04-19 → 2026-11-26 (+221d) | 2026-04-27 → 2026-12-05 (+222d) |  |  |  |
| 276 | **RHD4-02-002-Road Works - RW-Z5-(RD-L-8)** | 2026-03-29 → 2026-03-18 (-11d) | 2026-05-25 → 2027-01-11 (+231d) |  |  |  |
| RHD4CZ5L08RW1000 | Excavation works for Road (RD-L-8) - (B1.31 23 16.01)-Z5-L08-RW | 2026-03-29 → 2026-03-18 A (-11d) | 2026-05-11 → 2026-04-01 A (-40d) |  | 0% → 100% |  |
| RHD4CZ5L08RW2000 | Backfill Layers works Using Dynamic Compaction Crane (RIC) for Road (RD-L-8) - (B1.31 23 23.03)-Z5-L08-RW | 2026-05-12 → 2026-03-19 A (-54d) | 2026-05-18 → 2026-07-01 A (+44d) |  | 0% → 100% |  |
| RHD4CZ5L08RW3000 | Backfill Layers works using Improved fill Material for Road (RD-L-8) - (B1.31 23 23.01)-Z5-L08-RW | 2026-05-19 → 2027-01-05 (+231d) | 2026-05-25 → 2027-01-11 (+231d) |  |  |  |
| 277 | **RHD4-02-002-Z6-Road Works** | 2025-12-24 → 2026-01-14 (+21d) | 2026-06-24 → 2026-12-30 (+189d) |  |  |  |
| 278 | **RHD4-02-002-Road Works - RW-Z6-(RD-A-1 /5)** | 2026-05-19 → 2026-02-19 (-89d) | 2026-06-23 → 2026-12-30 (+190d) |  |  |  |
| RHD4CZ6A015RW1000 | Excavation works for Road (RD-A-1 /5) - (B1.31 23 16.01)-Z6-A015-RW | 2026-05-19 → 2026-02-19 A (-89d) | 2026-05-31 → 2026-12-19 A (+202d) |  | 0% → 100% | resources Skilled labor [125.02 h]; Unskilled Labor [250.04 h]; Equipment Opreator [2249.95 h]; Excavator-Poclain [250.04 h]; Water Truck [250.04 h]; Bulldozer/Dozer [250.04 h]; Loader [499.98 h]; Dump Truck [999.95 h]; Excavation in all types of soil to the required depth includes removal of waste material Including Excavation for Roads and Site [39857 m3] → Skilled labor [125.02 h]; Unskilled Labor [250.04 h]; Equipment Opreator [2249.95 h]; Excavator-Poclain [250.04 h]; Water Truck [250.04 h]; Bulldozer/Dozer [250.04 h]; Loader [500 h]; Dump Truck [999.95 h]; Excavation in all types of soil to the required depth includes removal of waste material Including Excavation for Roads and Site [39857 m3] |
| RHD4CZ6A015RW2000 | Backfill Layers works Using Dynamic Compaction Crane (RIC) for Road (RD-A-1 /5) - (B1.31 23 23.03)-Z6-A015-RW | 2026-06-01 → 2026-03-01 A (-92d) | 2026-06-11 → 2026-08-22 A (+72d) |  | 0% → 100% | resources Skilled labor [28.86 h]; Unskilled Labor [57.61 h]; Equipment Opreator [57.61 h]; RIC Machine [57.61 h]; Engineering fill using approved fill material placed in bulk and compacted by dynamic compaction method For Roads and Plots [21132 m3] → Skilled labor [28.86 h]; Unskilled Labor [57.6 h]; Equipment Opreator [57.6 h]; RIC Machine [57.6 h]; Engineering fill using approved fill material placed in bulk and compacted by dynamic compaction method For Roads and Plots [21132 m3] |
| RHD4CZ6A015RW3000 | Backfill Layers works using Improved fill Material for Road (RD-A-1 /5) - (B1.31 23 23.01)-Z6-A015-RW | 2026-06-13 → 2026-12-20 (+190d) | 2026-06-23 → 2026-12-30 (+190d) |  |  |  |
| 281 | **RHD4-02-002-Road Works - RW-Z6-(RD-C-6 /2)** | 2025-12-24 → 2026-01-14 (+21d) | 2026-02-04 → 2026-11-21 (+290d) |  |  |  |
| RHD4CZ6C062RW2000 | Backfill Layers works Using Dynamic Compaction Crane (RIC) for Road (RD-C-6 /2) - (B1.31 23 23.03)-Z6-C062-RW | 2026-01-14 A | 2026-01-17 → 2026-08-22 A (+217d) |  | 0% → 100% |  |
| RHD4CZ6C062RW1000 | Excavation works for Road (RD-C-6 /2) - (B1.31 23 16.01)-Z6-C062-RW | 2025-12-24 → 2026-01-29 A (+36d) | 2026-01-13 → 2026-02-10 A (+28d) |  | 0% → 100% | resources Skilled labor [86.8 h]; Unskilled Labor [173.59 h]; Equipment Opreator [1562.66 h]; Excavator-Poclain [173.59 h]; Water Truck [173.59 h]; Bulldozer/Dozer [173.59 h]; Loader [347.29 h]; Dump Truck [694.48 h]; Excavation in all types of soil to the required depth includes removal of waste material Including Excavation for Roads and Site [35576.7 m3] → Skilled labor [86.8 h]; Unskilled Labor [173.6 h]; Equipment Opreator [1562.66 h]; Excavator-Poclain [173.6 h]; Water Truck [173.6 h]; Bulldozer/Dozer [173.6 h]; Loader [347.29 h]; Dump Truck [694.48 h]; Excavation in all types of soil to the required depth includes removal of waste material Including Excavation for Roads and Site [35576.7 m3] |
| RHD4CZ6C062RW3000 | Backfill Layers works using Improved fill Material for Road (RD-C-6 /2) - (B1.31 23 23.01)-Z6-C062-RW | 2026-01-18 → 2026-11-03 (+289d) | 2026-02-04 → 2026-11-21 (+290d) |  |  |  |
| 280 | **RHD4-02-002-Road Works - RW-Z6-(RD-C-5 /2)** | 2026-06-01 → 2026-03-15 (-78d) | 2026-06-16 → 2026-12-29 (+196d) |  |  |  |
| RHD4CZ6C052RW1000 | Excavation works for Road (RD-C-5 /2) - (B1.31 23 16.01)-Z6-C052-RW | 2026-06-01 → 2026-03-15 A (-78d) | 2026-06-03 → 2026-12-20 (+200d) |  | 0% → 91% |  |
| RHD4CZ6C052RW2000 | Backfill Layers works Using Dynamic Compaction Crane (RIC) for Road (RD-C-5 /2) - (B1.31 23 23.03)-Z6-C052-RW | 2026-06-04 → 2026-03-18 A (-78d) | 2026-06-06 → 2026-08-22 A (+77d) |  | 0% → 100% | resources Skilled labor [4.03 h]; Unskilled Labor [8.06 h]; Equipment Opreator [8.06 h]; RIC Machine [8.06 h]; Engineering fill using approved fill material placed in bulk and compacted by dynamic compaction method For Roads and Plots [2247.11 m3] → Skilled labor [4 h]; Unskilled Labor [8.06 h]; Equipment Opreator [8.06 h]; RIC Machine [8.06 h]; Engineering fill using approved fill material placed in bulk and compacted by dynamic compaction method For Roads and Plots [2247.11 m3] |
| RHD4CZ6C052RW3000 | Backfill Layers works using Improved fill Material for Road (RD-C-5 /2) - (B1.31 23 23.01)-Z6-C052-RW | 2026-06-07 → 2026-12-20 (+196d) | 2026-06-16 → 2026-12-29 (+196d) |  |  |  |
| 279 | **RHD4-02-002-Road Works - RW-Z6-(RD-A-2)** | 2026-06-17 → 2026-02-25 (-112d) | 2026-06-24 → 2026-04-01 (-84d) |  |  |  |
| RHD4CZ6A02RW1000 | Excavation works for Road (RD-A-2) - (B1.31 23 16.01)-Z6-A02-RW | 2026-06-17 → 2026-02-25 A (-112d) | 2026-06-24 → 2026-04-01 A (-84d) |  | 0% → 100% |  |
| 264 | **RHD4-02-002-Z4-Road Works** |  | 2027-03-17 → 2027-09-01 (+168d) |  |  |  |
| 294 | **RHD4-02-002-Road Works - RW-Z4-(RD-L-1)** |  | 2027-01-28 → 2027-07-15 (+168d) |  |  |  |
| RHD4CZ4L01RW1000 | Excavation works for Road (RD-L-1) - (B1.31 23 16.01)-Z4-L01-RW | 2026-01-08 A | 2026-01-22 → 2026-07-29 A (+188d) |  | 0% → 100% |  |
| RHD4CZ4L01RW2000 | Backfill Layers works Using Dynamic Compaction Crane (RIC) for Road (RD-L-1) - (B1.31 23 23.03)-Z4-L01-RW | 2026-01-15 A | 2026-01-22 → 2026-08-27 A (+217d) |  | 0% → 100% |  |
| RHD4CZ4L01RW3000 | Backfill Layers works using Improved fill Material for Road (RD-L-1) - (B1.31 23 23.01)-Z4-L01-RW | 2027-01-27 → 2027-07-14 (+168d) | 2027-01-28 → 2027-07-15 (+168d) |  |  |  |
| 265 | **RHD4-02-002-Road Works - RW-Z4-(RD-A-1 /3)** |  | 2027-02-16 → 2027-08-08 (+173d) |  |  |  |
| RHD4CZ4A013RW1000 | Excavation works for Road (RD-A-1 /3) - Stage 1 - (B1.31 23 16.01)-Z4-A013-RW | 2026-01-24 A | 2026-02-04 → 2026-07-07 A (+153d) |  | 0% → 100% |  |
| RHD4CZ4A013RW1001 | Excavation works for Road (RD-A-1 /3) - Stage 2 - (B1.31 23 16.01)-Z4-A013-RW | 2026-02-05 A | 2026-02-23 → 2026-08-26 A (+184d) |  | 0% → 100% |  |
| RHD4CZ4A013RW2000 | Backfill Layers works Using Dynamic Compaction Crane (RIC) for Road (RD-A-1 /3) - (B1.31 23 23.03)-Z4-A013-RW | 2026-02-24 A | 2026-03-12 → 2026-08-22 A (+163d) |  | 0% → 100% |  |
| RHD4CZ4A013RW3000 | Backfill Layers works using Improved fill Material for Road (RD-A-1 /3) - Stage 1 - (B1.31 23 23.01)-Z4-A013-RW | 2027-01-30 → 2027-07-17 (+168d) | 2027-02-01 → 2027-07-21 (+170d) | 3d → 5d |  |  |
| RHD4CZ4A013RW3001 | Backfill Layers works using Improved fill Material for Road (RD-A-1 /3) - Stage 2 - (B1.31 23 23.01)-Z4-A013-RW | 2027-02-02 → 2027-07-22 (+170d) | 2027-02-04 → 2027-07-27 (+173d) | 3d → 5d |  |  |
| RHD4CZ4A013RW3002 | Backfill Layers works using Improved fill Material for Road (RD-A-1 /3) - Stage 3 - (B1.31 23 23.01)-Z4-A013-RW | 2027-02-06 → 2027-07-28 (+172d) | 2027-02-10 → 2027-08-02 (+173d) |  |  |  |
| RHD4CZ4A013RW3003 | Backfill Layers works using Improved fill Material for Road (RD-A-1 /3) - Stage 4 - (B1.31 23 23.01)-Z4-A013-RW | 2027-02-11 → 2027-08-03 (+173d) | 2027-02-16 → 2027-08-08 (+173d) |  |  |  |
| 267 | **RHD4-02-002-Road Works - RW-Z4-(RD-C-3/1)** |  | 2027-03-15 → 2027-08-30 (+168d) |  |  |  |
| RHD4CZ4C031RW1000 | Excavation works for Road (RD-C-3/1) - (B1.31 23 16.01)-Z4-C031-RW | 2026-03-14 A | 2026-03-17 → 2026-05-10 A (+54d) |  | 0% → 100% |  |
| RHD4CZ4C031RW2000 | Backfill Layers works Using Dynamic Compaction Crane (RIC) for Road (RD-C-3/1) - (B1.31 23 23.03)-Z4-C031-RW | 2026-03-26 A | 2026-04-09 → 2026-05-25 A (+46d) |  | 0% → 100% |  |
| RHD4CZ4C031RW3000 | Backfill Layers works using Improved fill Material for Road (RD-C-3/1) - (B1.31 23 23.01)-Z4-C031-RW | 2027-02-17 → 2027-08-09 (+173d) | 2027-03-15 → 2027-08-30 (+168d) |  |  |  |

| ID | Task | Start | Finish | Complete | Other |
| --- | --- | --- | --- | --- | --- |
| 268 | **RHD4-02-002-Road Works - RW-Z4-(RD-L-14)** | 2026-04-11 → 2026-04-13 (+2d) | 2027-03-04 → 2027-08-23 (+172d) |  |  |
| RHD4CZ4L014RW1000 | Excavation works for Road (RD-L-14) - (B1.31 23 16.01)-Z4-L014-RW | 2026-04-11 → 2026-04-13 A (+2d) | 2026-04-22 → 2026-05-27 A (+35d) | 0% → 100% | resources Skilled labor [42.15 h]; Unskilled Labor [84.4 h]; Equipment Opreator [759.17 h]; Excavator-Poclain [84.4 h]; Water Truck [84.4 h]; Bulldozer/Dozer [84.4 h]; Loader [168.69 h]; Dump Truck [337.38 h]; Excavation in all types of soil to the required depth includes removal of waste material Including Excavation for Roads and Site [1896.86 m3] → Skilled labor [42.15 h]; Unskilled Labor [84.4 h]; Equipment Opreator [759.2 h]; Excavator-Poclain [84.4 h]; Water Truck [84.4 h]; Bulldozer/Dozer [84.4 h]; Loader [168.69 h]; Dump Truck [337.38 h]; Excavation in all types of soil to the required depth includes removal of waste material Including Excavation for Roads and Site [1896.86 m3] |
| RHD4CZ4L014RW2000 | Backfill Layers works Using Dynamic Compaction Crane (RIC) for Road (RD-L-14) - (B1.31 23 23.03)-Z4-L014-RW | 2026-04-11 → 2026-04-19 A (+8d) | 2026-04-27 → 2026-09-20 A (+146d) | 0% → 100% |  |
| RHD4CZ4L014RW3000 | Backfill Layers works using Improved fill Material for Road (RD-L-14) - (B1.31 23 23.01)-Z4-L014-RW | 2027-02-17 → 2027-08-09 (+173d) | 2027-03-04 → 2027-08-23 (+172d) |  |  |
| 269 | **RHD4-02-002-Road Works - RW-Z4-(RD-L-9)** |  | 2027-03-15 → 2027-08-30 (+168d) |  |  |
| RHD4CZ4L09RW1000 | Excavation works for Road (RD-L-9) - Stage 1 - (B1.31 23 16.01)-Z4-L09-RW | 2026-04-27 A | 2026-05-10 → 2026-09-09 A (+122d) | 0% → 100% |  |
| RHD4CZ4L09RW1001 | Excavation works for Road (RD-L-9) - Stage 2 - (B1.31 23 16.01)-Z4-L09-RW | 2026-05-10 A | 2026-05-16 → 2026-09-09 A (+116d) | 0% → 100% |  |
| RHD4CZ4L09RW1002 | Excavation works for Road (RD-L-9) - Stage 3 - (B1.31 23 16.01)-Z4-L09-RW | 2026-05-16 → 2026-09-05 A (+112d) | 2026-06-01 → 2026-10-20 A (+141d) | 0% → 100% |  |
| RHD4CZ4L09RW1003 | Excavation works for Road (RD-L-9) - Stage 4 - (B1.31 23 16.01)-Z4-L09-RW | 2026-06-01 → 2026-09-05 A (+96d) | 2026-06-14 → 2026-10-21 A (+129d) | 0% → 100% |  |
| RHD4CZ4L09RW2000 | Backfill Layers works Using Dynamic Compaction Crane (RIC) for Road (RD-L-9) - (B1.31 23 23.03)-Z4-L09-RW | 2026-06-14 → 2026-10-20 A (+128d) | 2026-06-16 → 2026-11-04 (+141d) | 0% → 50% |  |
| RHD4CZ4L09RW4000 | Soil improvement works by Dynamic Compaction (DC) for Road (RD-L-9) - (B1.31 23 23.23.01)-Z4-L09-RW | 2026-06-16 → 2026-10-20 A (+126d) | 2026-07-02 → 2026-11-08 (+129d) | 0% → 80% |  |
| RHD4CZ4L09RW3000 | Backfill Layers works using Improved fill Material for Road (RD-L-9) - Stage 1 - (B1.31 23 23.01)-Z4-L09-RW | 2027-03-06 → 2027-08-24 (+171d) | 2027-03-07 → 2027-08-25 (+171d) |  | resources Skilled labor [6.43 h]; Unskilled Labor [6.43 h]; Equipment Opreator [22.65 h]; Water Truck [3.27 h]; Grader [3.27 h]; Loader [3.27 h]; Dump Truck [12.96 h]; Engineering backfilling with improved and select fill material from the site or imported Including embankment in layers For Roads [1378.64 m3] → Skilled labor [6.4 h]; Unskilled Labor [6.4 h]; Equipment Opreator [22.65 h]; Water Truck [3.27 h]; Grader [3.27 h]; Loader [3.27 h]; Dump Truck [12.96 h]; Engineering backfilling with improved and select fill material from the site or imported Including embankment in layers For Roads [1378.64 m3] |
| RHD4CZ4L09RW3001 | Backfill Layers works using Improved fill Material for Road (RD-L-9) - Stage 2 - (B1.31 23 23.01)-Z4-L09-RW | 2027-03-08 → 2027-08-26 (+171d) | 2027-03-13 → 2027-08-28 (+168d) |  | resources Skilled labor [6.43 h]; Unskilled Labor [6.43 h]; Equipment Opreator [22.65 h]; Water Truck [3.27 h]; Grader [3.27 h]; Loader [3.27 h]; Dump Truck [12.96 h]; Engineering backfilling with improved and select fill material from the site or imported Including embankment in layers For Roads [1378.64 m3] → Skilled labor [6.4 h]; Unskilled Labor [6.4 h]; Equipment Opreator [22.65 h]; Water Truck [3.27 h]; Grader [3.27 h]; Loader [3.27 h]; Dump Truck [12.96 h]; Engineering backfilling with improved and select fill material from the site or imported Including embankment in layers For Roads [1378.64 m3] |
| RHD4CZ4L09RW3002 | Backfill Layers works using Improved fill Material for Road (RD-L-9) - Stage 3 - (B1.31 23 23.01)-Z4-L09-RW | 2027-03-14 → 2027-08-29 (+168d) | 2027-03-15 → 2027-08-30 (+168d) |  | resources Skilled labor [6.43 h]; Unskilled Labor [6.43 h]; Equipment Opreator [22.65 h]; Water Truck [3.27 h]; Grader [3.27 h]; Loader [3.27 h]; Dump Truck [12.96 h]; Engineering backfilling with improved and select fill material from the site or imported Including embankment in layers For Roads [1378.64 m3] → Skilled labor [6.4 h]; Unskilled Labor [6.4 h]; Equipment Opreator [22.65 h]; Water Truck [3.27 h]; Grader [3.27 h]; Loader [3.27 h]; Dump Truck [12.96 h]; Engineering backfilling with improved and select fill material from the site or imported Including embankment in layers For Roads [1378.64 m3] |
| 266 | **RHD4-02-002-Road Works - RW-Z4-(RD-C-1 /2)** | 2026-06-16 → 2026-09-01 (+77d) | 2027-03-17 → 2027-09-01 (+168d) |  |  |
| RHD4CZ4C012RW1000 | Excavation works for Road (RD-C-1 /2) - (B1.31 23 16.01)-Z4-C012-RW | 2026-06-16 → 2026-09-01 A (+77d) | 2026-06-18 → 2026-11-07 (+142d) | 0% → 50% | resources Skilled labor [9.58 h]; Unskilled Labor [19.06 h]; Equipment Opreator [171.52 h]; Excavator-Poclain [19.06 h]; Water Truck [19.06 h]; Bulldozer/Dozer [19.06 h]; Loader [38.12 h]; Dump Truck [76.23 h]; Excavation in all types of soil to the required depth includes removal of waste material Including Excavation for Roads and Site [1452.01 m3] → Skilled labor [9.6 h]; Unskilled Labor [19.06 h]; Equipment Opreator [171.52 h]; Excavator-Poclain [19.06 h]; Water Truck [19.06 h]; Bulldozer/Dozer [19.06 h]; Loader [38.12 h]; Dump Truck [76.23 h]; Excavation in all types of soil to the required depth includes removal of waste material Including Excavation for Roads and Site [1452.01 m3] |
| RHD4CZ4C012RW2000 | Backfill Layers works Using Dynamic Compaction Crane (RIC) for Road (RD-C-1 /2) - (B1.31 23 23.03)-Z4-C012-RW | 2026-06-18 → 2026-09-10 A (+84d) | 2026-06-22 → 2026-11-10 (+141d) | 0% → 50% |  |
| RHD4CZ4C012RW3000 | Backfill Layers works using Improved fill Material for Road (RD-C-1 /2) - (B1.31 23 23.01)-Z4-C012-RW | 2027-03-16 → 2027-08-31 (+168d) | 2027-03-17 → 2027-09-01 (+168d) |  |  |
| 290 | **RHD4-02-002-Z8-Road Works** |  | 2027-01-12 → 2027-06-21 (+160d) |  |  |
| 291 | **RHD4-02-002-Road Works - RW-Z8-(RD-A-1 /1)** |  | 2026-02-03 → 2026-11-08 (+278d) |  |  |
| RHD4CZ8A011RW1000 | Excavation works for Road (RD-A-1 /1) - (B1.31 23 16.01)-Z8-A011-RW | 2026-01-08 A | 2026-01-18 → 2026-07-13 A (+176d) | 0% → 100% |  |
| RHD4CZ8A011RW2000 | Backfill Layers works Using Dynamic Compaction Crane (RIC) for Road (RD-A-1 /1) - (B1.31 23 23.03)-Z8-A011-RW | 2026-01-19 → 2026-07-04 A (+166d) | 2026-01-28 → 2026-08-27 A (+211d) | 0% → 100% |  |
| RHD4CZ8A011RW3000 | Backfill Layers works using Improved fill Material for Road (RD-A-1 /1) - (B1.31 23 23.01)-Z8-A011-RW | 2026-01-29 → 2026-11-03 (+278d) | 2026-02-03 → 2026-11-08 (+278d) |  |  |
| 295 | **RHD4-02-002-Road Works - RW-Z8-(RD-L-4)** | 2026-01-17 → 2026-07-22 (+186d) | 2026-01-29 → 2026-11-04 (+279d) |  |  |
| RHD4CZ8L04RW1000 | Excavation works for Road (RD-L-4) - (B1.31 23 16.01)-Z8-L04-RW | 2026-01-17 → 2026-07-22 A (+186d) | 2026-01-24 → 2026-08-03 A (+191d) | 0% → 100% |  |
| RHD4CZ8L04RW2000 | Backfill Layers works Using Dynamic Compaction Crane (RIC) for Road (RD-L-4) - (B1.31 23 23.03)-Z8-L04-RW | 2026-01-25 → 2026-08-01 A (+188d) | 2026-01-27 → 2026-08-07 A (+192d) | 0% → 100% |  |
| RHD4CZ8L04RW3000 | Backfill Layers works using Improved fill Material for Road (RD-L-4) - (B1.31 23 23.01)-Z8-L04-RW | 2026-01-28 → 2026-11-03 (+279d) | 2026-01-29 → 2026-11-04 (+279d) |  |  |
| 292 | **RHD4-02-002-Road Works - RW-Z8-(RD-C-1/4)** | 2027-01-02 → 2027-06-10 (+159d) | 2027-01-12 → 2027-06-21 (+160d) |  |  |
| RHD4CZ8C014RW1000 | Excavation works for Road (RD-C-1/4) - (B1.31 23 16.01)-Z8-C014-RW | 2027-01-02 → 2027-06-10 (+159d) | 2027-01-05 → 2027-06-14 (+160d) |  |  |
| RHD4CZ8C014RW2000 | Backfill Layers works Using Dynamic Compaction Crane (RIC) for Road (RD-C-1/4) - (B1.31 23 23.03)-Z8-C014-RW | 2027-01-06 → 2027-06-15 (+160d) | 2027-01-10 → 2027-06-19 (+160d) |  |  |
| RHD4CZ8C014RW3000 | Backfill Layers works using Improved fill Material for Road (RD-C-1/4) - (B1.31 23 23.01)-Z8-C014-RW | 2027-01-11 → 2027-06-20 (+160d) | 2027-01-12 → 2027-06-21 (+160d) |  |  |
| 282 | **RHD4-02-002-Z7-Road Works** |  | 2026-08-27 → 2027-02-09 (+166d) |  |  |
| 286 | **RHD4-02-002-Road Works - RW-Z7-(RD-C-3/2)** |  | 2026-03-01 → 2026-11-07 (+251d) |  |  |
| RHD4CZ7C032RW1000 | Excavation works for Road (RD-C-3/2) - Stage 1 - (B1.31 23 16.01)-Z7-C032-RW | 2025-12-24 A | 2025-12-30 → 2026-05-05 A (+126d) | 0% → 100% |  |
| RHD4CZ7C032RW1001 | Excavation works for Road (RD-C-3/2) - Stage 2 - (B1.31 23 16.01)-Z7-C032-RW | 2025-12-31 A | 2026-01-19 → 2026-05-25 A (+126d) | 0% → 100% |  |
| RHD4CZ7C032RW1002 | Excavation works for Road (RD-C-3/2) - Stage 3 - (B1.31 23 16.01)-Z7-C032-RW | 2026-01-20 A | 2026-02-03 → 2026-07-14 A (+161d) | 0% → 100% |  |
| RHD4CZ7C032RW1003 | Excavation works for Road (RD-C-3/2) - Stage 4 - (B1.31 23 16.01)-Z7-C032-RW(Completed) | 2026-02-04 A | 2026-02-24 → 2026-08-03 A (+160d) | 0% → 100% |  |
| RHD4CZ7C032RW2000 | Backfill Layers works Using Dynamic Compaction Crane (RIC) for Road (RD-C-3/2) - (B1.31 23 23.03)-Z7-C032-RW | 2026-02-25 → 2026-11-03 (+251d) | 2026-02-26 → 2026-11-04 (+251d) |  |  |
| RHD4CZ7C032RW3000 | Backfill Layers works using Improved fill Material for Road (RD-C-3/2) - (B1.31 23 23.01)-Z7-C032-RW | 2026-02-28 → 2026-11-05 (+250d) | 2026-03-01 → 2026-11-07 (+251d) |  |  |
| 289 | **RHD4-02-002-Road Works - RW-Z7-(RD-L-3)** | 2025-12-31 → 2026-04-05 (+95d) | 2026-03-31 → 2026-11-21 (+235d) |  |  |
| RHD4CZ7L03RW1000 | Excavation works for Road (RD-L-3) - (B1.31 23 16.01)-Z7-L03-RW | 2025-12-31 → 2026-04-05 A (+95d) | 2026-02-21 → 2026-05-27 A (+95d) | 0% → 100% | resources Skilled labor [45.19 h]; Unskilled Labor [90.39 h]; Equipment Opreator [813.07 h]; Excavator-Poclain [90.39 h]; Water Truck [90.39 h]; Bulldozer/Dozer [90.39 h]; Loader [180.67 h]; Dump Truck [361.34 h]; Excavation in all types of soil to the required depth includes removal of waste material Including Excavation for Roads and Site [23442.7 m3] → Skilled labor [45.19 h]; Unskilled Labor [90.4 h]; Equipment Opreator [813.07 h]; Excavator-Poclain [90.4 h]; Water Truck [90.4 h]; Bulldozer/Dozer [90.4 h]; Loader [180.67 h]; Dump Truck [361.34 h]; Excavation in all types of soil to the required depth includes removal of waste material Including Excavation for Roads and Site [23442.7 m3] |
| RHD4CZ7L03RW2000 | Backfill Layers works Using Dynamic Compaction Crane (RIC) for Road (RD-L-3) - (B1.31 23 23.03)-Z7-L03-RW | 2026-02-23 → 2026-04-08 A (+44d) | 2026-03-10 → 2026-05-20 A (+71d) | 0% → 100% |  |
| RHD4CZ7L03RW3000 | Backfill Layers works using Improved fill Material for Road (RD-L-3) - (B1.31 23 23.01)-Z7-L03-RW | 2026-03-11 → 2026-11-03 (+237d) | 2026-03-31 → 2026-11-21 (+235d) |  |  |
| 287 | **RHD4-02-002-Road Works - RW-Z7-(RD-L-13/1)** |  | 2026-01-22 → 2026-11-22 (+304d) |  |  |
| RHD4CZ7L131RW1000 | Excavation works for Road (RD-L-13/1) - (B1.31 23 16.01)-Z7-L131-RW | 2025-12-31 A | 2026-01-19 → 2026-06-01 A (+133d) | 0% → 100% |  |
| RHD4CZ7L131RW2000 | Backfill Layers works Using Dynamic Compaction Crane (RIC) for Road (RD-L-13/1) - (B1.31 23 23.03)-Z7-L131-RW | 2025-12-31 A | 2026-01-03 → 2026-08-22 A (+231d) | 0% → 100% |  |
| RHD4CZ7L131RW3000 | Backfill Layers works using Improved fill Material for Road (RD-L-13/1) - (B1.31 23 23.01)-Z7-L131-RW | 2026-01-04 → 2026-11-03 (+303d) | 2026-01-22 → 2026-11-22 (+304d) |  | resources Skilled labor [63.16 h]; Unskilled Labor [63.16 h]; Equipment Opreator [220.86 h]; Water Truck [31.58 h]; Grader [31.58 h]; Loader [31.58 h]; Dump Truck [126.22 h]; Engineering backfilling with improved and select fill material from the site or imported Including embankment in layers For Roads [2448.42 m3] → Skilled labor [63.2 h]; Unskilled Labor [63.2 h]; Equipment Opreator [220.86 h]; Water Truck [31.58 h]; Grader [31.58 h]; Loader [31.58 h]; Dump Truck [126.22 h]; Engineering backfilling with improved and select fill material from the site or imported Including embankment in layers For Roads [2448.42 m3] |
| 284 | **RHD4-02-002-Road Works - RW-Z7-(RD-C-1/3)** | 2026-08-20 → 2026-09-17 (+28d) | 2026-08-27 → 2027-02-09 (+166d) |  |  |
| RHD4CZ7C013RW1000 | Excavation works for Road (RD-C-1/3) - (B1.31 23 16.01)-Z7-C013-RW | 2026-08-20 → 2026-09-17 A (+28d) | 2026-08-22 → 2026-09-19 A (+28d) | 0% → 100% |  |
| RHD4CZ7C013RW2000 | Backfill Layers works Using Dynamic Compaction Crane (RIC) for Road (RD-C-1/3) - (B1.31 23 23.03)-Z7-C013-RW | 2026-08-23 → 2026-09-20 A (+28d) | 2026-08-25 → 2026-09-22 A (+28d) | 0% → 100% |  |
| RHD4CZ7C013RW3000 | Backfill Layers works using Improved fill Material for Road (RD-C-1/3) - (B1.31 23 23.01)-Z7-C013-RW | 2026-08-26 → 2027-02-08 (+166d) | 2026-08-27 → 2027-02-09 (+166d) |  |  |
| 288 | **RHD4-02-002-Road Works - RW-Z7-(RD-L-15)** | 2025-12-31 → 2026-04-18 (+108d) | 2026-03-08 → 2026-11-12 (+249d) |  |  |
| RHD4CZ7L015RW1000 | Excavation works for Road (RD-L-15) - (B1.31 23 16.01)-Z7-L015-RW | 2025-12-31 → 2026-04-18 A (+108d) | 2026-02-02 → 2026-05-27 A (+114d) | 0% → 100% | resources Skilled labor [38.12 h]; Unskilled Labor [76.23 h]; Equipment Opreator [685.98 h]; Excavator-Poclain [76.23 h]; Water Truck [76.23 h]; Bulldozer/Dozer [76.23 h]; Loader [152.46 h]; Dump Truck [304.82 h]; Excavation in all types of soil to the required depth includes removal of waste material Including Excavation for Roads and Site [9688.2 m3] → Skilled labor [38.12 h]; Unskilled Labor [76.23 h]; Equipment Opreator [685.98 h]; Excavator-Poclain [76.23 h]; Water Truck [76.23 h]; Bulldozer/Dozer [76.23 h]; Loader [152.46 h]; Dump Truck [304.8 h]; Excavation in all types of soil to the required depth includes removal of waste material Including Excavation for Roads and Site [9688.2 m3] |
| RHD4CZ7L015RW2000 | Backfill Layers works Using Dynamic Compaction Crane (RIC) for Road (RD-L-15) - (B1.31 23 23.03)-Z7-L015-RW | 2026-01-04 → 2026-05-31 A (+147d) | 2026-02-25 → 2026-06-22 A (+117d) | 0% → 100% |  |
| RHD4CZ7L015RW3000 | Backfill Layers works using Improved fill Material for Road (RD-L-15) - (B1.31 23 23.01)-Z7-L015-RW | 2026-02-26 → 2026-11-03 (+250d) | 2026-03-08 → 2026-11-12 (+249d) |  | resources Skilled labor [42.8 h]; Unskilled Labor [42.8 h]; Equipment Opreator [149.63 h]; Water Truck [21.35 h]; Grader [21.35 h]; Loader [21.35 h]; Dump Truck [85.49 h]; Engineering backfilling with improved and select fill material from the site or imported Including embankment in layers For Roads [2640.47 m3] → Skilled labor [42.8 h]; Unskilled Labor [42.8 h]; Equipment Opreator [149.6 h]; Water Truck [21.35 h]; Grader [21.35 h]; Loader [21.35 h]; Dump Truck [85.49 h]; Engineering backfilling with improved and select fill material from the site or imported Including embankment in layers For Roads [2640.47 m3] |
| 283 | **RHD4-02-002-Road Works - RW-Z7-(RD-A-1 /2)** | 2026-02-03 → 2026-03-07 (+32d) | 2026-04-04 → 2026-11-17 (+227d) |  |  |
| RHD4CZ7A012RW2000 | Backfill Layers works Using Dynamic Compaction Crane (RIC) for Road (RD-A-1 /2) - (B1.31 23 23.03)-Z7-A012-RW | 2026-03-07 A | 2026-03-17 → 2026-06-22 A (+97d) | 0% → 100% | resources Skilled labor [46.39 h]; Unskilled Labor [92.68 h]; Equipment Opreator [92.68 h]; RIC Machine [92.68 h]; Engineering fill using approved fill material placed in bulk and compacted by dynamic compaction method For Roads and Plots [33966.6 m3] → Skilled labor [46.4 h]; Unskilled Labor [92.68 h]; Equipment Opreator [92.68 h]; RIC Machine [92.68 h]; Engineering fill using approved fill material placed in bulk and compacted by dynamic compaction method For Roads and Plots [33966.6 m3] |
| RHD4CZ7A012RW1000 | Excavation works for Road (RD-A-1 /2) - (B1.31 23 16.01)-Z7-A012-RW | 2026-02-03 → 2026-05-30 A (+116d) | 2026-03-05 → 2026-06-27 A (+114d) | 0% → 100% |  |
| RHD4CZ7A012RW3000 | Backfill Layers works using Improved fill Material for Road (RD-A-1 /2) - (B1.31 23 23.01)-Z7-A012-RW | 2026-03-18 → 2026-11-03 (+230d) | 2026-04-04 → 2026-11-17 (+227d) |  | resources Skilled labor [105.64 h]; Unskilled Labor [105.64 h]; Equipment Opreator [369.84 h]; Water Truck [52.82 h]; Grader [52.82 h]; Loader [52.82 h]; Dump Truck [211.27 h]; Engineering backfilling with improved and select fill material from the site or imported Including embankment in layers For Roads [4524.13 m3] → Skilled labor [105.6 h]; Unskilled Labor [105.6 h]; Equipment Opreator [369.84 h]; Water Truck [52.8 h]; Grader [52.8 h]; Loader [52.8 h]; Dump Truck [211.27 h]; Engineering backfilling with improved and select fill material from the site or imported Including embankment in layers For Roads [4524.13 m3] |
| 285 | **RHD4-02-002-Road Works - RW-Z7-(RD-C-2)** | 2026-06-17 → 2026-08-09 (+53d) | 2026-07-02 → 2027-01-05 (+187d) |  |  |
| RHD4CZ7C02RW1000 | Excavation works for Road (RD-C-2) - (B1.31 23 16.01)-Z7-C02-RW(Completed) | 2026-06-17 → 2026-08-09 A (+53d) | 2026-06-25 → 2026-08-30 A (+66d) | 0% → 100% | resources Skilled labor [29.95 h]; Unskilled Labor [59.9 h]; Equipment Opreator [539.18 h]; Excavator-Poclain [59.9 h]; Water Truck [59.9 h]; Bulldozer/Dozer [59.9 h]; Loader [119.79 h]; Dump Truck [239.59 h]; Excavation in all types of soil to the required depth includes removal of waste material Including Excavation for Roads and Site [18790.4 m3] → Skilled labor [29.95 h]; Unskilled Labor [59.9 h]; Equipment Opreator [539.2 h]; Excavator-Poclain [59.9 h]; Water Truck [59.9 h]; Bulldozer/Dozer [59.9 h]; Loader [119.79 h]; Dump Truck [239.59 h]; Excavation in all types of soil to the required depth includes removal of waste material Including Excavation for Roads and Site [18790.4 m3] |
| RHD4CZ7C02RW2000 | Backfill Layers works Using Dynamic Compaction Crane (RIC) for Road (RD-C-2) - (B1.31 23 23.03)-Z7-C02-RW | 2026-06-27 → 2026-08-30 A (+64d) | 2026-06-30 → 2027-01-03 (+187d) | 0% → 88% |  |
| RHD4CZ7C02RW3000 | Backfill Layers works using Improved fill Material for Road (RD-C-2) - (B1.31 23 23.01)-Z7-C02-RW | 2026-07-01 → 2027-01-04 (+187d) | 2026-07-02 → 2027-01-05 (+187d) |  |  |
| 296 | **RHD4-02-002-Z9-Road Works** |  | 2026-02-19 → 2026-11-15 (+269d) |  |  |
| 297 | **RHD4-02-002-Road Works - RW-Z9-(RD-C-7/1)** | 2026-01-22 → 2026-06-30 (+159d) | 2026-02-19 → 2026-11-15 (+269d) |  |  |
| RHD4CZ9C071RW1000 | Excavation works for Road (RD-C-7/1) - (B1.31 23 16.01)-Z9-C071-RW | 2026-01-22 → 2026-06-30 A (+159d) | 2026-02-03 → 2026-09-01 A (+210d) | 0% → 100% |  |
| RHD4CZ9C071RW2000 | Backfill Layers works Using Dynamic Compaction Crane (RIC) for Road (RD-C-7/1) - (B1.31 23 23.03)-Z9-C071-RW | 2026-02-04 → 2026-07-14 A (+160d) | 2026-02-07 → 2026-08-27 A (+201d) | 0% → 100% |  |
| RHD4CZ9C071RW3000 | Backfill Layers works using Improved fill Material for Road (RD-C-7/1) - (B1.31 23 23.01)-Z9-C071-RW | 2026-02-08 → 2026-11-03 (+268d) | 2026-02-19 → 2026-11-15 (+269d) |  |  |
| 299 | **RHD4-02-002-Road Works - RW-Z9-(RD-L-5)** |  | 2026-01-19 → 2026-11-04 (+289d) |  |  |
| RHD4CZ9L05RW1000 | Excavation works for Road (RD-L-5) - (B1.31 23 16.01)-Z9-L05-RW | 2025-12-24 A | 2025-12-25 → 2026-07-14 A (+201d) | 0% → 100% | resources Skilled labor [4.68 h]; Unskilled Labor [9.37 h]; Equipment Opreator [84.51 h]; Excavator-Poclain [9.37 h]; Water Truck [9.37 h]; Bulldozer/Dozer [9.37 h]; Loader [18.73 h]; Dump Truck [37.57 h]; Excavation in all types of soil to the required depth includes removal of waste material Including Excavation for Roads and Site → Skilled labor [4.68 h]; Unskilled Labor [9.37 h]; Equipment Opreator [84.51 h]; Excavator-Poclain [9.37 h]; Water Truck [9.37 h]; Bulldozer/Dozer [9.37 h]; Loader [18.73 h]; Dump Truck [37.6 h]; Excavation in all types of soil to the required depth includes removal of waste material Including Excavation for Roads and Site |

| ID | Task | Start | Finish | Complete | Other |
| --- | --- | --- | --- | --- | --- |
| RHD4CZ9L05RW2000 | Backfill Layers works Using Dynamic Compaction Crane (RIC) for Road (RD-L-5) - (B1.31 23 23.03)-Z9-L05-RW | 2026-01-15 A | 2026-01-17 → 2026-08-29 A (+224d) | 0% → 100% |  |
| RHD4CZ9L05RW3000 | Backfill Layers works using Improved fill Material for Road (RD-L-5) - (B1.31 23 23.01)-Z9-L05-RW | 2026-01-18 → 2026-11-03 (+289d) | 2026-01-19 → 2026-11-04 (+289d) |  |  |
| 300 | **RHD4-02-002-Road Works - RW-Z9-(RD-L-6)** |  | 2026-01-29 → 2026-11-09 (+284d) |  |  |
| RHD4CZ9L06RW1000 | Excavation works for Road (RD-L-6) - (B1.31 23 16.01)-Z9-L06-RW(Completed) | 2025-12-24 A | 2026-01-18 → 2026-08-03 A (+197d) | 0% → 100% |  |
| RHD4CZ9L06RW2000 | Backfill Layers works Using Dynamic Compaction Crane (RIC) for Road (RD-L-6) - (B1.31 23 23.03)-Z9-L06-RW | 2026-01-19 → 2026-08-08 A (+201d) | 2026-01-25 → 2026-11-04 (+283d) | 0% → 82% |  |
| RHD4CZ9L06RW3000 | Backfill Layers works using Improved fill Material for Road (RD-L-6) - (B1.31 23 23.01)-Z9-L06-RW | 2026-01-26 → 2026-11-05 (+283d) | 2026-01-29 → 2026-11-09 (+284d) |  |  |
| 298 | **RHD4-02-002-Road Works - RW-Z9-(RD-L-2)** | 2026-01-22 → 2026-02-04 (+13d) | 2026-02-16 → 2026-11-11 (+268d) |  |  |
| RHD4CZ9L02RW2000 | Backfill Layers works Using Dynamic Compaction Crane (RIC) for Road (RD-L-2) - (B1.31 23 23.03)-Z9-L02-RW | 2026-02-04 A | 2026-02-09 → 2026-11-04 (+268d) | 0% → 65% |  |
| RHD4CZ9L02RW1000 | Excavation works for Road (RD-L-2) - (B1.31 23 16.01)-Z9-L02-RW | 2026-01-22 → 2026-06-30 A (+159d) | 2026-02-02 → 2026-08-22 A (+201d) | 0% → 100% |  |
| RHD4CZ9L02RW3000 | Backfill Layers works using Improved fill Material for Road (RD-L-2) - (B1.31 23 23.01)-Z9-L02-RW | 2026-02-10 → 2026-11-04 (+267d) | 2026-02-16 → 2026-11-11 (+268d) |  |  |
| 260 | **RHD4-02-002-Z3-Road Works** | 2026-02-28 → 2026-03-25 (+25d) | 2027-01-26 → 2027-07-13 (+168d) |  |  |
| 261 | **RHD4-02-002-Road Works - RW-Z3-(RD-C-1 /1)** |  | 2027-01-26 → 2027-07-13 (+168d) |  |  |
| RHD4CZ3C011RW1000 | Excavation works for Road (RD-C-1 /1) - Stage 1 - (B1.31 23 16.01)-Z3-C011-RW | 2026-03-25 A | 2026-04-06 → 2026-08-06 A (+122d) | 0% → 100% |  |
| RHD4CZ3C011RW1001 | Excavation works for Road (RD-C-1 /1) - Stage 2 - (B1.31 23 16.01)-Z3-C011-RW | 2026-04-07 A | 2026-04-09 → 2026-08-06 A (+119d) | 0% → 100% |  |
| RHD4CZ3C011RW1002 | Excavation works for Road (RD-C-1 /1) - Stage 3 - (B1.31 23 16.01)-Z3-C011-RW | 2026-04-11 A | 2026-04-15 → 2026-08-12 A (+119d) | 0% → 100% |  |
| RHD4CZ3C011RW2000 | Backfill Layers works Using Dynamic Compaction Crane (RIC) for Road (RD-C-1 /1) - (B1.31 23 23.03)-Z3-C011-RW | 2026-04-29 → 2026-08-05 A (+98d) | 2026-05-05 → 2026-08-22 A (+109d) | 0% → 100% |  |
| RHD4CZ3C011RW1003 | Excavation works for Road (RD-C-1 /1) - Stage 4 - (B1.31 23 16.01)-Z3-C011-RW | 2026-04-16 → 2026-09-01 A (+138d) | 2026-04-28 → 2026-09-13 A (+138d) | 0% → 100% |  |
| RHD4CZ3C011RW3000 | Backfill Layers works using Improved fill Material for Road (RD-C-1 /1) - Stage 1 - (B1.31 23 23.01)-Z3-C011-RW | 2027-01-18 → 2027-07-05 (+168d) | 2027-01-19 → 2027-07-06 (+168d) |  |  |
| RHD4CZ3C011RW3001 | Backfill Layers works using Improved fill Material for Road (RD-C-1 /1) - Stage 2 - (B1.31 23 23.01)-Z3-C011-RW | 2027-01-20 → 2027-07-07 (+168d) | 2027-01-21 → 2027-07-08 (+168d) |  |  |
| RHD4CZ3C011RW3002 | Backfill Layers works using Improved fill Material for Road (RD-C-1 /1) - Stage 3 - (B1.31 23 23.01)-Z3-C011-RW | 2027-01-23 → 2027-07-10 (+168d) | 2027-01-24 → 2027-07-11 (+168d) |  |  |
| RHD4CZ3C011RW3003 | Backfill Layers works using Improved fill Material for Road (RD-C-1 /1) - Stage 4 - (B1.31 23 23.01)-Z3-C011-RW | 2027-01-25 → 2027-07-12 (+168d) | 2027-01-26 → 2027-07-13 (+168d) |  |  |
| 263 | **RHD4-02-002-Road Works - RW-Z3-(RD-L-12/2)** | 2026-02-28 → 2026-06-16 (+108d) | 2027-01-21 → 2027-07-08 (+168d) |  |  |
| RHD4CZ3L122RW2000 | Backfill Layers works Using Dynamic Compaction Crane (RIC) for Road (RD-L-12/2) - (B1.31 23 23.03)-Z3-L122-RW | 2026-06-13 → 2026-06-16 A (+3d) | 2026-07-11 → 2026-07-05 A (-6d) | 0% → 100% |  |
| RHD4CZ3L122RW1000 | Excavation works for Road (RD-L-12/2) - (B1.31 23 16.01)-Z3-L122-RW | 2026-02-28 → 2026-06-30 A (+122d) | 2026-03-14 → 2026-07-08 A (+116d) | 0% → 100% |  |
| RHD4CZ3L122RW3000 | Backfill Layers works using Improved fill Material for Road (RD-L-12/2) - Stage 1 - (B1.31 23 23.01)-Z3-L122-RW | 2027-01-16 → 2027-07-03 (+168d) | 2027-01-17 → 2027-07-04 (+168d) |  | resources Skilled labor [37.24 h]; Unskilled Labor [37.24 h]; Equipment Opreator [130.14 h]; Water Truck [18.62 h]; Grader [18.62 h]; Loader [18.62 h]; Dump Truck [74.38 h]; Engineering backfilling with improved and select fill material from the site or imported Including embankment in layers For Roads → Skilled labor [37.24 h]; Unskilled Labor [37.24 h]; Equipment Opreator [130.14 h]; Water Truck [18.62 h]; Grader [18.62 h]; Loader [18.62 h]; Dump Truck [74.4 h]; Engineering backfilling with improved and select fill material from the site or imported Including embankment in layers For Roads |
| RHD4CZ3L122RW3001 | Backfill Layers works using Improved fill Material for Road (RD-L-12/2) - Stage 2 - (B1.31 23 23.01)-Z3-L122-RW | 2027-01-18 → 2027-07-05 (+168d) | 2027-01-19 → 2027-07-06 (+168d) |  | resources Skilled labor [37.24 h]; Unskilled Labor [37.24 h]; Equipment Opreator [130.14 h]; Water Truck [18.62 h]; Grader [18.62 h]; Loader [18.62 h]; Dump Truck [74.38 h]; Engineering backfilling with improved and select fill material from the site or imported Including embankment in layers For Roads → Skilled labor [37.24 h]; Unskilled Labor [37.24 h]; Equipment Opreator [130.14 h]; Water Truck [18.62 h]; Grader [18.62 h]; Loader [18.62 h]; Dump Truck [74.4 h]; Engineering backfilling with improved and select fill material from the site or imported Including embankment in layers For Roads |
| RHD4CZ3L122RW3002 | Backfill Layers works using Improved fill Material for Road (RD-L-12/2) - Stage 3 - (B1.31 23 23.01)-Z3-L122-RW | 2027-01-20 → 2027-07-07 (+168d) | 2027-01-21 → 2027-07-08 (+168d) |  | resources Skilled labor [37.24 h]; Unskilled Labor [37.24 h]; Equipment Opreator [130.14 h]; Water Truck [18.62 h]; Grader [18.62 h]; Loader [18.62 h]; Dump Truck [74.38 h]; Engineering backfilling with improved and select fill material from the site or imported Including embankment in layers For Roads [2037.65 m3] → Skilled labor [37.24 h]; Unskilled Labor [37.24 h]; Equipment Opreator [130.14 h]; Water Truck [18.62 h]; Grader [18.62 h]; Loader [18.62 h]; Dump Truck [74.4 h]; Engineering backfilling with improved and select fill material from the site or imported Including embankment in layers For Roads [2037.65 m3] |
| 262 | **RHD4-02-002-Road Works - RW-Z3-(RD-C-8 /3)** | 2026-09-10 → 2027-01-19 (+131d) | 2027-01-21 → 2027-07-08 (+168d) |  |  |
| RHD4CZ3C083RW1000 | Excavation works for Road (RD-C-8 /3) - (B1.31 23 16.01)-Z3-C083-RW | 2026-09-10 → 2027-01-19 (+131d) | 2026-10-05 → 2027-02-11 (+129d) |  |  |
| RHD4CZ3C083RW2000 | Backfill Layers works Using Dynamic Compaction Crane (RIC) for Road (RD-C-8 /3) - (B1.31 23 23.03)-Z3-C083-RW | 2026-10-06 → 2027-02-13 (+130d) | 2026-10-07 → 2027-02-14 (+130d) |  |  |
| RHD4CZ2C083RW3000 | Backfill Layers works using Improved fill Material for Road (RD-C-8 /3) - Stage 1 - (B1.31 23 23.01)-Z2-C083-RW | 2027-01-18 → 2027-07-05 (+168d) | 2027-01-19 → 2027-07-06 (+168d) |  |  |
| RHD4CZ3C083RW3001 | Backfill Layers works using Improved fill Material for Road (RD-C-8 /3) - Stage 2 - (B1.31 23 23.01)-Z3-C083-RW | 2027-01-20 → 2027-07-07 (+168d) | 2027-01-21 → 2027-07-08 (+168d) |  |  |
| 255 | **RHD4-02-002-Z2-Road Works** |  | 2027-08-04 → 2028-02-15 (+195d) |  |  |
| 257 | **RHD4-02-002-Road Works - RW-Z2-(RD-L-10/2)** |  | 2027-08-04 → 2028-02-15 (+195d) |  |  |
| RHD4CZ2L102RW1000 | Excavation works for Road (RD-L-10/2) - (B1.31 23 16.01)-Z2-L102-RW(Completed) | 2026-02-28 A | 2026-03-19 → 2026-08-03 A (+137d) | 0% → 100% |  |
| RHD4CZ2L102RW2000 | Backfill Layers works Using Dynamic Compaction Crane (RIC) for Road (RD-L-10/2) - (B1.31 23 23.03)-Z2-L102-RW(Completed) | 2026-02-28 A | 2026-03-17 → 2026-08-03 A (+139d) | 0% → 100% |  |
| RHD4CZ1L102RW3000 | Backfill Layers works using Improved fill Material for Road (RD-L-10/2) - Stage 1 - (B1.31 23 23.01)-Z1-L102-RW | 2027-07-29 → 2028-02-09 (+195d) | 2027-07-31 → 2028-02-10 (+194d) |  |  |
| RHD4CZ2L102RW3001 | Backfill Layers works using Improved fill Material for Road (RD-L-10/2) - Stage 2 - (B1.31 23 23.01)-Z2-L102-RW | 2027-08-01 → 2028-02-12 (+195d) | 2027-08-02 → 2028-02-13 (+195d) |  |  |
| RHD4CZ2L102RW3002 | Backfill Layers works using Improved fill Material for Road (RD-L-10/2) - Stage 3 - (B1.31 23 23.01)-Z2-L102-RW | 2027-08-03 → 2028-02-14 (+195d) | 2027-08-04 → 2028-02-15 (+195d) |  |  |
| 258 | **RHD4-02-002-Road Works - RW-Z2-(RD-L-11)** | 2026-03-23 → 2026-08-04 (+134d) | 2027-01-14 → 2027-07-01 (+168d) |  |  |
| RHD4CZ2L011RW1000 | Excavation works for Road (RD-L-11) - (B1.31 23 16.01)-Z2-L011-RW | 2026-03-23 → 2026-08-04 A (+134d) | 2026-03-24 → 2026-08-26 A (+155d) | 0% → 100% | resources Skilled labor [9.04 h]; Unskilled Labor [17.97 h]; Equipment Opreator [161.83 h]; Excavator-Poclain [17.97 h]; Water Truck [17.97 h]; Bulldozer/Dozer [17.97 h]; Loader [35.94 h]; Dump Truck [71.99 h]; Excavation in all types of soil to the required depth includes removal of waste material Including Excavation for Roads and Site [2010.87 m3] → Skilled labor [9.04 h]; Unskilled Labor [17.97 h]; Equipment Opreator [161.83 h]; Excavator-Poclain [17.97 h]; Water Truck [17.97 h]; Bulldozer/Dozer [17.97 h]; Loader [35.94 h]; Dump Truck [72 h]; Excavation in all types of soil to the required depth includes removal of waste material Including Excavation for Roads and Site [2010.87 m3] |
| RHD4CZ2L011RW2000 | Backfill Layers works Using Dynamic Compaction Crane (RIC) for Road (RD-L-11) - (B1.31 23 23.03)-Z2-L011-RW | 2026-03-25 → 2026-08-05 A (+133d) | 2026-03-26 → 2026-08-25 A (+152d) | 0% → 100% |  |
| RHD4CZ2L011RW3000 | Backfill Layers works using Improved fill Material for Road (RD-L-11) - (B1.31 23 23.01)-Z2-L011-RW | 2027-01-13 → 2027-06-30 (+168d) | 2027-01-14 → 2027-07-01 (+168d) |  |  |
| 256 | **RHD4-02-002-Road Works - RW-Z2-(RD-C-8 /2)** | 2026-03-28 → 2026-08-04 (+129d) | 2027-01-17 → 2027-07-04 (+168d) |  |  |
| RHD4CZ2C082RW1000 | Excavation works for Road (RD-C-8 /2) - (B1.31 23 16.01)-Z2-C082-RW | 2026-03-28 → 2026-08-04 A (+129d) | 2026-04-07 → 2026-08-19 A (+134d) | 0% → 100% | resources Skilled labor [54.02 h]; Unskilled Labor [108.03 h]; Equipment Opreator [972.29 h]; Excavator-Poclain [108.03 h]; Water Truck [108.03 h]; Bulldozer/Dozer [108.03 h]; Loader [216.06 h]; Dump Truck [432.13 h]; Excavation in all types of soil to the required depth includes removal of waste material Including Excavation for Roads and Site [7392.74 m3] → Skilled labor [54.02 h]; Unskilled Labor [108 h]; Equipment Opreator [972.29 h]; Excavator-Poclain [108 h]; Water Truck [108 h]; Bulldozer/Dozer [108 h]; Loader [216.06 h]; Dump Truck [432.13 h]; Excavation in all types of soil to the required depth includes removal of waste material Including Excavation for Roads and Site [7392.74 m3] |
| RHD4CZ2C082RW2000 | Backfill Layers works Using Dynamic Compaction Crane (RIC) for Road (RD-C-8 /2) - (B1.31 23 23.03)-Z2-C082-RW | 2026-04-08 → 2026-09-01 A (+146d) | 2026-04-09 → 2026-09-02 A (+146d) | 0% → 100% |  |
| RHD4CZ2C082RW3000 | Backfill Layers works using Improved fill Material for Road (RD-C-8 /2) - (B1.31 23 23.01)-Z2-C082-RW | 2027-01-16 → 2027-07-03 (+168d) | 2027-01-17 → 2027-07-04 (+168d) |  |  |
| 252 | **RHD4-02-002-Z1-Road Works** | 2026-03-25 → 2026-04-22 (+28d) | 2027-07-14 → 2028-02-03 (+204d) |  |  |
| 254 | **RHD4-02-002-Road Works - RW-Z1-(RD-L-10/1)** | 2026-03-25 → 2026-08-04 (+132d) | 2027-07-14 → 2028-02-03 (+204d) |  |  |
| RHD4CZ1L101RW1000 | Excavation works for Road (RD-L-10/1) - (B1.31 23 16.01)-Z1-L101-RW | 2026-03-25 → 2026-08-04 A (+132d) | 2026-04-02 → 2026-11-23 (+235d) | 0% → 46% | resources Skilled labor [40.84 h]; Unskilled Labor [81.68 h]; Equipment Opreator [735.1 h]; Excavator-Poclain [81.68 h]; Water Truck [81.68 h]; Bulldozer/Dozer [81.68 h]; Loader [163.36 h]; Dump Truck [326.71 h]; Excavation in all types of soil to the required depth includes removal of waste material Including Excavation for Roads and Site [7422.99 m3] → Skilled labor [40.8 h]; Unskilled Labor [81.68 h]; Equipment Opreator [735.1 h]; Excavator-Poclain [81.68 h]; Water Truck [81.68 h]; Bulldozer/Dozer [81.68 h]; Loader [163.36 h]; Dump Truck [326.71 h]; Excavation in all types of soil to the required depth includes removal of waste material Including Excavation for Roads and Site [7422.99 m3] |
| RHD4CZ1L101RW2000 | Backfill Layers works Using Dynamic Compaction Crane (RIC) for Road (RD-L-10/1) - (B1.31 23 23.03)-Z1-L101-RW | 2026-04-04 → 2026-08-10 A (+128d) | 2026-04-07 → 2026-11-24 (+231d) | 0% → 66% |  |
| RHD4CZ1L101RW3000 | Backfill Layers works using Improved fill Material for Road (RD-L-10/1) - (B1.31 23 23.01)-Z1-L101-RW | 2027-07-13 → 2028-02-02 (+204d) | 2027-07-14 → 2028-02-03 (+204d) |  |  |
| 253 | **RHD4-02-002-Road Works - RW-Z1-(RD-C-8 /1)** | 2026-04-08 → 2026-04-22 (+14d) | 2027-06-23 → 2027-11-30 (+160d) |  |  |
| RHD4CZ1C081RW2000 | Backfill Layers works Using Dynamic Compaction Crane (RIC) for Road (RD-C-8 /1) - (B1.31 23 23.03)-Z1-C081-RW | 2026-04-22 A | 2026-05-05 → 2026-08-13 A (+100d) | 0% → 100% |  |
| RHD4CZ1C081RW1000 | Excavation works for Road (RD-C-8 /1) - (B1.31 23 16.01)-Z1-C081-RW | 2026-04-08 → 2026-08-04 A (+118d) | 2026-04-21 → 2026-08-25 A (+126d) | 0% → 100% |  |
| RHD4CZ1C081RW3000 | Backfill Layers works using Improved fill Material for Road (RD-C-8 /1) - (B1.31 23 23.01)-Z1-C081-RW | 2027-06-22 → 2027-11-29 (+160d) | 2027-06-23 → 2027-11-30 (+160d) |  |  |
| 301 | **RHD4-02-002-Round About - RA** |  | 2026-07-29 → 2027-01-05 (+160d) |  |  |
| 304 | **RHD4-02-002-Z4-Round Abouts** |  | 2026-03-28 → 2026-11-04 (+221d) |  |  |
| 305 | **RHD4-02-002-Road Works - RW-Z4-(ROUND-02)** |  | 2026-03-28 → 2026-11-04 (+221d) |  |  |
| RHD4CZ4RA02RA1000 | Excavation works for (ROUND-02) - (B1.31 23 16.01)-Z4-RA02-RA | 2026-02-05 A | 2026-02-19 → 2026-06-30 A (+131d) | 0% → 100% | resources Skilled labor [60.22 h]; Unskilled Labor [120.34 h]; Equipment Opreator [1083.48 h]; Excavator-Poclain [120.34 h]; Water Truck [120.34 h]; Bulldozer/Dozer [120.34 h]; Loader [240.79 h]; Dump Truck [481.57 h]; Excavation in all types of soil to the required depth includes removal of waste material Including Excavation for Roads and Site [18153.7 m3] → Skilled labor [60.22 h]; Unskilled Labor [120.34 h]; Equipment Opreator [1083.48 h]; Excavator-Poclain [120.34 h]; Water Truck [120.34 h]; Bulldozer/Dozer [120.34 h]; Loader [240.8 h]; Dump Truck [481.6 h]; Excavation in all types of soil to the required depth includes removal of waste material Including Excavation for Roads and Site [18153.7 m3] |
| RHD4CZ4RA02RA2000 | Backfill Layers works Using Dynamic Compaction Crane (RIC) for (ROUND-02) - (B1.31 23 23.03)-Z4-RA02-RA | 2026-03-14 A | 2026-03-25 → 2026-07-11 A (+108d) | 0% → 100% |  |
| RHD4CZ4RA02RA3000 | Backfill Layers works using Improved fill Material for (ROUND-02) - (B1.31 23 23.01)-Z4-RA02-RA | 2026-03-26 → 2026-11-03 (+222d) | 2026-03-28 → 2026-11-04 (+221d) |  |  |
| 306 | **RHD4-02-002-Z5-Round Abouts** | 2026-02-21 → 2026-03-01 (+8d) | 2026-04-02 → 2026-12-24 (+266d) |  |  |
| 307 | **RHD4-02-002-Road Works - RW-Z5-(ROUND-07)** | 2026-02-21 → 2026-03-01 (+8d) | 2026-04-02 → 2026-12-24 (+266d) |  |  |
| RHD4CZ5RA07RA1000 | Excavation works for (ROUND-07) - (B1.31 23 16.01)-Z5-RA07-RA | 2026-02-21 → 2026-03-01 A (+8d) | 2026-03-07 → 2026-03-18 A (+11d) | 0% → 100% |  |
| RHD4CZ5RA07RA2000 | Backfill Layers works Using Dynamic Compaction Crane (RIC) for (ROUND-07) - (B1.31 23 23.03)-Z5-RA07-RA | 2026-03-14 → 2026-03-15 A (+1d) | 2026-03-15 → 2026-11-03 (+233d) | 0% → 81% |  |
| RHD4CZ5RA07RA3000 | Backfill Layers works using Improved fill Material for (ROUND-07) - (B1.31 23 23.01)-Z5-RA07-RA | 2026-03-29 → 2026-12-20 (+266d) | 2026-04-02 → 2026-12-24 (+266d) |  |  |
| 308 | **RHD4-02-002-Z6-Round Abouts** |  | 2026-01-14 → 2026-11-09 (+299d) |  |  |
| 309 | **RHD4-02-002-Road Works - RW-Z6-(ROUND-01)** |  | 2026-01-14 → 2026-11-09 (+299d) |  |  |
| RHD4CZ6RA01RA1000 | Excavation works for (ROUND-01) - (B1.31 23 16.01)-Z6-RA01-RA | 2025-12-22 A | 2026-01-05 → 2026-03-05 A (+59d) | 0% → 100% | resources Skilled labor [65.23 h]; Unskilled Labor [130.47 h]; Equipment Opreator [1173.76 h]; Excavator-Poclain [130.47 h]; Water Truck [130.47 h]; Bulldozer/Dozer [130.47 h]; Loader [260.82 h]; Dump Truck [521.65 h]; Excavation in all types of soil to the required depth includes removal of waste material Including Excavation for Roads and Site [19665.4 m3] → Skilled labor [65.23 h]; Unskilled Labor [130.47 h]; Equipment Opreator [1173.76 h]; Excavator-Poclain [130.47 h]; Water Truck [130.47 h]; Bulldozer/Dozer [130.47 h]; Loader [260.8 h]; Dump Truck [521.65 h]; Excavation in all types of soil to the required depth includes removal of waste material Including Excavation for Roads and Site [19665.4 m3] |

| ID | Task | Start | Finish | Duration | Complete | Other |
| --- | --- | --- | --- | --- | --- | --- |
| RHD4CZ6RA01RA2000 | Backfill Layers works Using Dynamic Compaction Crane (RIC) for (ROUND-01) - (B1.31 23 23.03)-Z6-RA01-RA | 2026-01-06 A | 2026-01-07 → 2026-03-08 A (+60d) |  | 0% → 100% |  |
| RHD4CZ6RA01RA3000 | Backfill Layers works using Improved fill Material for (ROUND-01) - (B1.31 23 23.01)-Z6-RA01-RA | 2026-01-08 → 2026-11-03 (+299d) | 2026-01-14 → 2026-11-09 (+299d) |  |  |  |
| 310 | **RHD4-02-002-Z7-Round Abouts** | 2026-06-17 → 2026-07-01 (+14d) | 2026-07-29 → 2027-01-05 (+160d) |  |  |  |
| 311 | **RHD4-02-002-Road Works - RW-Z7-(ROUND-03)** | 2026-06-17 → 2026-07-01 (+14d) | 2026-07-20 → 2027-01-05 (+169d) |  |  |  |
| RHD4CZ7RA03RA1000 | Excavation works for (ROUND-03) - (B1.31 23 16.01)-Z7-RA03-RA(Completed) | 2026-06-17 → 2026-07-01 A (+14d) | 2026-07-20 → 2026-08-03 A (+14d) |  | 0% → 100% |  |
| RHD4CZ7RA03RA2000 | Backfill Layers works Using Dynamic Compaction Crane (RIC) for (ROUND-03) - (B1.31 23 23.03)-Z7-RA03-RA(Completed) | 2026-06-17 → 2026-07-03 A (+16d) | 2026-07-18 → 2026-08-03 A (+16d) |  | 0% → 100% | resources Skilled labor [7.19 h]; Unskilled Labor [14.38 h]; Equipment Opreator [14.38 h]; RIC Machine [14.38 h]; Engineering fill using approved fill material placed in bulk and compacted by dynamic compaction method For Roads and Plots [13971.5 m3] → Skilled labor [7.2 h]; Unskilled Labor [14.4 h]; Equipment Opreator [14.4 h]; RIC Machine [14.4 h]; Engineering fill using approved fill material placed in bulk and compacted by dynamic compaction method For Roads and Plots [13971.5 m3] |
| RHD4CZ7RA03RA3000 | Backfill Layers works using Improved fill Material for (ROUND-03) - (B1.31 23 23.01)-Z7-RA03-RA | 2026-07-19 → 2027-01-04 (+169d) | 2026-07-20 → 2027-01-05 (+169d) |  |  |  |
| 312 | **RHD4-02-002-Road Works - RW-Z7-(ROUND-05)** | 2026-07-21 → 2026-08-04 (+14d) | 2026-07-29 → 2027-01-05 (+160d) |  |  |  |
| RHD4CZ7RA05RA2000 | Backfill Layers works Using Dynamic Compaction Crane (RIC) for (ROUND-05) - (B1.31 23 23.03)-Z7-RA05-RA | 2026-07-25 → 2026-08-04 A (+10d) | 2026-07-27 → 2027-01-03 (+160d) |  | 0% → 67% |  |
| RHD4CZ7RA05RA1000 | Excavation works for (ROUND-05) - (B1.31 23 16.01)-Z7-RA05-RA | 2026-07-21 → 2026-12-30 (+162d) | 2026-07-23 → 2027-01-02 (+163d) |  |  |  |
| RHD4CZ7RA05RA3000 | Backfill Layers works using Improved fill Material for (ROUND-05) - (B1.31 23 23.01)-Z7-RA05-RA | 2026-07-28 → 2027-01-04 (+160d) | 2026-07-29 → 2027-01-05 (+160d) |  |  | resources Skilled labor [34.41 h]; Unskilled Labor [34.41 h]; Equipment Opreator [120.67 h]; Water Truck [17.21 h]; Grader [17.21 h]; Loader [17.21 h]; Dump Truck [68.94 h]; Engineering backfilling with improved and select fill material from the site or imported Including embankment in layers For Roads [1293.99 m3] → Skilled labor [34.4 h]; Unskilled Labor [34.4 h]; Equipment Opreator [120.67 h]; Water Truck [17.21 h]; Grader [17.21 h]; Loader [17.21 h]; Dump Truck [68.94 h]; Engineering backfilling with improved and select fill material from the site or imported Including embankment in layers For Roads [1293.99 m3] |
| 313 | **RHD4-02-002-Z8-Round Abouts** |  | 2026-02-11 → 2026-11-14 (+276d) |  |  |  |
| 314 | **RHD4-02-002-Road Works - RW-Z8-(ROUND-04)** |  | 2026-02-11 → 2026-11-14 (+276d) |  |  |  |
| RHD4CZ8RA04RA1000 | Excavation works for (ROUND-04) - (B1.31 23 16.01)-Z8-RA04-RA | 2026-01-08 A | 2026-01-13 → 2026-07-13 A (+181d) |  | 0% → 100% | resources Skilled labor [14.81 h]; Unskilled Labor [29.62 h]; Equipment Opreator [266.16 h]; Excavator-Poclain [29.62 h]; Water Truck [29.62 h]; Bulldozer/Dozer [29.62 h]; Loader [59.13 h]; Dump Truck [118.27 h]; Excavation in all types of soil to the required depth includes removal of waste material Including Excavation for Roads and Site [4459.5 m3] → Skilled labor [14.81 h]; Unskilled Labor [29.6 h]; Equipment Opreator [266.16 h]; Excavator-Poclain [29.6 h]; Water Truck [29.6 h]; Bulldozer/Dozer [29.6 h]; Loader [59.13 h]; Dump Truck [118.27 h]; Excavation in all types of soil to the required depth includes removal of waste material Including Excavation for Roads and Site [4459.5 m3] |
| RHD4CZ8RA04RA2000 | Backfill Layers works Using Dynamic Compaction Crane (RIC) for (ROUND-04) - (B1.31 23 23.03)-Z8-RA04-RA | 2026-01-19 A | 2026-01-31 → 2026-07-12 A (+162d) |  | 0% → 100% |  |
| RHD4CZ8RA04RA3000 | Backfill Layers works using Improved fill Material for (ROUND-04) - (B1.31 23 23.01)-Z8-RA04-RA | 2026-02-01 → 2026-11-03 (+275d) | 2026-02-11 → 2026-11-14 (+276d) |  |  |  |
| 4676 | **RHD4-02-002-Z6** |  | 2027-07-12 → 2028-01-24 (+196d) |  |  |  |
| 5244 | **RHD4-02-002-Z6-C062** |  | 2027-07-06 → 2028-01-23 (+201d) |  |  |  |
| 5423 | **RHD4-02-002-Z6-C062-Road Works - RD** | 2026-09-09 → 2026-05-02 (-130d) | 2027-07-06 → 2028-01-23 (+201d) |  |  |  |
| 5424 | **RHD4-02-002-C062-(RD)-Subgrade** | 2026-09-09 → 2026-05-02 (-130d) | 2026-09-16 → 2026-06-04 (-104d) |  |  |  |
| RHD4CZ6C062RD1100 | Supply, lay and compaction subgrade compacted thickness 300 mm for Roads - (RD-C-6 /2)-Z6-C062-RD | 2026-09-09 → 2026-05-02 A (-130d) | 2026-09-16 → 2026-06-04 A (-104d) |  | 0% → 100% | resources Skilled labor [65.34 h]; Unskilled Labor [130.68 h]; Electrician [65.34 h]; Equipment Opreator [446.29 h]; Water Truck [21.56 h]; Roller compactor [32.67 h]; Grader [65.34 h]; Dump Truck [326.71 h]; Subgrade [3142.69 m3] → Skilled labor [65.34 h]; Unskilled Labor [130.68 h]; Electrician [65.34 h]; Equipment Opreator [446.29 h]; Water Truck [21.6 h]; Roller compactor [32.67 h]; Grader [65.34 h]; Dump Truck [326.71 h]; Subgrade [3142.69 m3] |
| 5425 | **RHD4-02-002-C062-(RD)-Aggregate Base Course** | 2026-09-17 → 2027-02-08 (+144d) | 2026-09-22 → 2027-02-13 (+144d) |  |  |  |
| RHD4CZ6C062RD2100 | Supply, lay and compaction Aggregate base course compacted thickness 300 mmfor Roads - (RD-C-6 /2)-Z6-C062-RD | 2026-09-17 → 2027-02-08 (+144d) | 2026-09-22 → 2027-02-13 (+144d) |  |  | resources Skilled labor [24.18 h]; Unskilled Labor [48.35 h]; Equipment Opreator [306.35 h]; Water Truck [16.01 h]; Roller compactor [48.35 h]; Grader [48.35 h]; Dump Truck [193.63 h]; Aggregate Base Courses [1973.92 m3] → Skilled labor [24.18 h]; Unskilled Labor [48.35 h]; Equipment Opreator [306.35 h]; Water Truck [16 h]; Roller compactor [48.35 h]; Grader [48.35 h]; Dump Truck [193.6 h]; Aggregate Base Courses [1973.92 m3] |
| 5426 | **RHD4-02-002-C062-(RD)-Bituminous base course Two Layers, including (MC1)&(RC2)** | 2026-09-24 → 2027-03-15 (+172d) | 2027-06-26 → 2028-01-04 (+192d) |  |  |  |
| RHD4CZ6C062RD3100 | Supply, lay and Asphaltic base course including Prime Coat (MC1) for 1st Layer - (RD-C-6 /2)-Z6-C062-RD | 2026-09-24 → 2027-03-15 (+172d) | 2026-09-26 → 2027-03-16 (+171d) |  |  | resources Skilled labor [19.17 h]; Unskilled Labor [115.33 h]; Equipment Opreator [288.27 h]; Bobcat [19.17 h]; Roller compactor [19.17 h]; Asphalt Paver [19.17 h]; Rubber Compactor [38.44 h]; MC1/RC2 Sprinkler [19.17 h]; Dump Truck [172.94 h]; Bituminous base course (Grading I - Class A), including Prime coat (MC1) & tack coate (RC2) [703.12 m3] → Skilled labor [19.2 h]; Unskilled Labor [115.33 h]; Equipment Opreator [288.27 h]; Bobcat [19.2 h]; Roller compactor [19.2 h]; Asphalt Paver [19.2 h]; Rubber Compactor [38.44 h]; MC1/RC2 Sprinkler [19.2 h]; Dump Truck [172.94 h]; Bituminous base course (Grading I - Class A), including Prime coat (MC1) & tack coate (RC2) [703.12 m3] |
| RHD4CZ6C062RD3200 | Supply, lay and Asphaltic base course including Tack Coat (RC2) for 2nd Layer - (RD-C-6 /2)-Z6-C062-RD | 2027-06-24 → 2028-01-03 (+193d) | 2027-06-26 → 2028-01-04 (+192d) |  |  | resources Skilled labor [19.17 h]; Unskilled Labor [115.33 h]; Equipment Opreator [288.27 h]; Bobcat [19.17 h]; Roller compactor [19.17 h]; Asphalt Paver [19.17 h]; Rubber Compactor [38.44 h]; MC1/RC2 Sprinkler [19.17 h]; Dump Truck [172.94 h]; Bituminous base course (Grading I - Class A), including Prime coat (MC1) & tack coate (RC2) [703.12 m3] → Skilled labor [19.2 h]; Unskilled Labor [115.33 h]; Equipment Opreator [288.27 h]; Bobcat [19.2 h]; Roller compactor [19.2 h]; Asphalt Paver [19.2 h]; Rubber Compactor [38.44 h]; MC1/RC2 Sprinkler [19.2 h]; Dump Truck [172.94 h]; Bituminous base course (Grading I - Class A), including Prime coat (MC1) & tack coate (RC2) [703.12 m3] |
| 5428 | **RHD4-02-002-C062-(RD)-Precast Concrete Curb** | 2027-06-27 → 2028-01-05 (+192d) | 2027-06-29 → 2028-01-11 (+196d) |  |  |  |
| RHD4CZ6C062RD5100 | Supply and installation Precast Concrete Kerb for Roads - (RD-C-6 /2)-Z6-C062-RD | 2027-06-27 → 2028-01-05 (+192d) | 2027-06-29 → 2028-01-11 (+196d) | 3d → 6d |  |  |
| 5431 | **RHD4-02-002-C062-(RD)-Traffic Signage** | 2027-06-30 → 2028-01-12 (+196d) | 2027-07-03 → 2028-01-19 (+200d) |  |  |  |
| RHD4CZ6C062RD8100 | Installation of Traffic Signage for Road Network - (RD-C-6 /2)-Z6-C062-RD | 2027-06-30 → 2028-01-12 (+196d) | 2027-07-03 → 2028-01-19 (+200d) | 3d → 7d |  | resources Skilled labor [152.46 h]; Unskilled Labor [76.23 h]; Electrician [23.96 h]; Equipment Opreator [24.83 h]; Boom Truck [15.25 h]; Concrete Mixer Truck [9.58 h]; Traffic signs, ground mounted, 1 Sheet Aluminium, (breakaway)Single post [21 nr] → Skilled labor [152.46 h]; Unskilled Labor [76.23 h]; Electrician [23.96 h]; Equipment Opreator [24.8 h]; Boom Truck [15.25 h]; Concrete Mixer Truck [9.6 h]; Traffic signs, ground mounted, 1 Sheet Aluminium, (breakaway)Single post [21 nr] |
| 5427 | **RHD4-02-002-C062-(RD)-Bituminous concrete wearing course including tack coat (RC2)** | 2027-06-30 → 2028-01-12 (+196d) | 2027-07-01 → 2028-01-13 (+196d) |  |  |  |
| RHD4CZ6C062RD4100 | Supply, lay and compaction Asphaltic wearing course including tack Coat (RC2)for Road Network - (RD-C-6 /2)-Z6-C062-RD | 2027-06-30 → 2028-01-12 (+196d) | 2027-07-01 → 2028-01-13 (+196d) |  |  |  |
| 5430 | **RHD4-02-002-C062-(RD)-Pavement Marking** | 2027-07-04 → 2028-01-20 (+200d) | 2027-07-06 → 2028-01-23 (+201d) |  |  |  |
| RHD4CZ6C062RD7100 | Pavement Markings for Road Network - (RD-C-6 /2)-Z6-C062-RD | 2027-07-04 → 2028-01-20 (+200d) | 2027-07-06 → 2028-01-23 (+201d) |  |  |  |
| 5248 | **RHD4-02-002-Z6-C062-Storm Network - ST** |  | 2026-10-25 → 2027-04-19 (+176d) |  |  |  |
| 4132 | **RHD4-02-002-C062-(ST)-MH Works - 2000 mm diameter** |  | 2026-07-28 → 2027-02-07 (+194d) |  |  |  |
| RHD4CZ6C062ST3102 | Excavation and PC Blinding works for MH 2000 mm - (RD-C-6 /2)-Z6-C062-ST | 2026-07-18 A | 2026-07-19 → 2026-08-05 A (+17d) |  | 0% → 100% |  |
| RHD4CZ6C062ST3202 | Installation of Base for MH 2000 mm - (RD-C-6 /2)-Z6-C062-ST | 2026-07-20 → 2026-10-20 A (+92d) | 2026-07-21 → 2027-01-31 (+194d) |  | 0% → 70% |  |
| RHD4CZ6C062ST3302 | MH Ring and C.Slab works and Backfilling works for MH 2000 mm - (RD-C-6 /2)-Z6-C062-ST | 2026-07-22 → 2027-02-01 (+194d) | 2026-07-23 → 2027-02-02 (+194d) |  |  | resources Skilled labor [5.45 h]; Unskilled Labor [5.45 h]; Equipment Opreator [3.81 h]; Boom Truck [2.18 h]; Concrete Mixer Truck [1.63 h]; MH (2000mm Diameter) - ST - depth 3.51 -4.5m [0.35 nr] → Skilled labor [5.45 h]; Unskilled Labor [5.45 h]; Equipment Opreator [3.81 h]; Boom Truck [2.18 h]; Concrete Mixer Truck [1.6 h]; MH (2000mm Diameter) - ST - depth 3.51 -4.5m [0.35 nr] |
| RHD4CZ6C062ST3402 | Steel Cover for MH 2000 mm - (RD-C-6 /2)-Z6-C062-ST | 2026-07-25 → 2027-02-03 (+193d) | 2026-07-26 → 2027-02-04 (+193d) |  |  | resources Skilled labor [3.59 h]; Unskilled Labor [7.3 h]; Equipment Opreator [0.76 h]; Boom Truck [0.76 h]; MH (2000mm Diameter) - ST - depth 3.51 -4.5m [0.05 nr] → Skilled labor [3.59 h]; Unskilled Labor [7.3 h]; Equipment Opreator [0.8 h]; Boom Truck [0.8 h]; MH (2000mm Diameter) - ST - depth 3.51 -4.5m [0.05 nr] |
| RHD4CZ6C062ST3502 | Finishing, Benching, Testing works for MH 2000 mm - (RD-C-6 /2)-Z6-C062-ST | 2026-07-27 → 2027-02-06 (+194d) | 2026-07-28 → 2027-02-07 (+194d) |  |  |  |
| 4120 | **RHD4-02-002-C062-(ST)-GRP Pipes - 1000 mm diameter** |  | 2026-07-30 → 2026-08-17 (+18d) |  |  |  |
| RHD4CZ6C062ST1106 | Excavation works for GRP Pipe Line 1000 mm - (RD-C-6 /2)-Z6-C062-ST | 2026-07-20 A | 2026-07-21 → 2026-08-05 A (+15d) |  | 0% → 100% |  |
| RHD4CZ6C062ST1206 | Bedding works for GRP Pipe Line 1000 mm - (RD-C-6 /2)-Z6-C062-ST | 2026-07-22 A | 2026-07-23 → 2026-08-08 A (+16d) |  | 0% → 100% |  |
| RHD4CZ6C062ST1306 | Installing for GRP Pipe Line 1000 mm - (RD-C-6 /2)-Z6-C062-ST | 2026-07-25 → 2026-08-09 A (+15d) | 2026-07-26 → 2026-08-10 A (+15d) |  | 0% → 100% |  |
| RHD4CZ6C062ST1406 | Primary Test for GRP Pipe Line 1000 mm - (RD-C-6 /2)-Z6-C062-ST | 2026-07-27 → 2026-08-11 A (+15d) | 2026-07-28 → 2026-08-12 A (+15d) |  | 0% → 100% |  |
| RHD4CZ6C062ST1506 | Backfilling and warning tape works for GRP Pipe Line 1000 mm - (RD-C-6 /2)-Z6-C062-ST | 2026-07-29 → 2026-08-16 A (+18d) | 2026-07-30 → 2026-08-17 A (+18d) |  | 0% → 100% |  |
| 5266 | **RHD4-02-002-C062-(ST)-MH Works - 1500 mm diameter** | 2026-08-23 → 2026-08-04 (-19d) | 2026-10-25 → 2027-04-19 (+176d) |  |  |  |
| RHD4CZ6C062ST3101 | Excavation and PC Blinding works for MH 1500 mm - (RD-C-6 /2)-Z6-C062-ST | 2026-08-23 → 2026-08-04 A (-19d) | 2026-08-25 → 2026-08-06 A (-19d) |  | 0% → 100% |  |
| RHD4CZ6C062ST3201 | Installation of Base for MH 1500 mm - (RD-C-6 /2)-Z6-C062-ST | 2026-08-26 → 2026-08-06 A (-20d) | 2026-08-29 → 2027-02-01 (+156d) |  | 0% → 83% |  |
| RHD4CZ6C062ST3301 | MH Ring and C.Slab works and Backfilling works for MH 1500 mm - (RD-C-6 /2)-Z6-C062-ST | 2026-08-30 → 2027-02-02 (+156d) | 2026-09-01 → 2027-02-04 (+156d) |  |  |  |
| RHD4CZ6C062ST3401 | Steel Cover for MH 1500 mm - (RD-C-6 /2)-Z6-C062-ST | 2026-10-11 → 2027-04-05 (+176d) | 2026-10-12 → 2027-04-06 (+176d) |  |  |  |
| RHD4CZ6C062ST3501 | Finishing, Benching, Testing works for MH 1500 mm - (RD-C-6 /2)-Z6-C062-ST | 2026-10-22 → 2027-04-17 (+177d) | 2026-10-25 → 2027-04-19 (+176d) |  |  |  |
| 5265 | **RHD4-02-002-C062-(ST)-MH Works - 1200 mm diameter** | 2026-08-26 → 2026-08-04 (-22d) | 2026-10-21 → 2027-04-15 (+176d) |  |  |  |
| RHD4CZ6C062ST3100 | Excavation and PC Blinding works for MH 1200 mm - (RD-C-6 /2)-Z6-C062-ST | 2026-08-26 → 2026-08-04 A (-22d) | 2026-08-30 → 2026-08-06 A (-24d) |  | 0% → 100% |  |
| RHD4CZ6C062ST3200 | Installation of Base for MH 1200 mm - (RD-C-6 /2)-Z6-C062-ST | 2026-08-31 → 2026-08-06 A (-25d) | 2026-09-03 → 2027-02-02 (+152d) |  | 0% → 92% |  |
| RHD4CZ6C062ST3300 | MH Ring and C.Slab works and Backfilling works for MH 1200 mm - (RD-C-6 /2)-Z6-C062-ST | 2026-09-05 → 2027-02-03 (+151d) | 2026-09-08 → 2027-02-07 (+152d) |  |  |  |
| RHD4CZ6C062ST3400 | Steel Cover for MH 1200 mm - (RD-C-6 /2)-Z6-C062-ST | 2026-10-06 → 2027-03-31 (+176d) | 2026-10-10 → 2027-04-04 (+176d) |  |  |  |
| RHD4CZ6C062ST3500 | Finishing, Benching, Testing works for MH 1200 mm - (RD-C-6 /2)-Z6-C062-ST | 2026-10-18 → 2027-04-12 (+176d) | 2026-10-21 → 2027-04-15 (+176d) |  |  |  |
| 5253 | **RHD4-02-002-C062-(ST)-GRP Pipes - 800 mm diameter** | 2026-08-31 → 2026-08-05 (-26d) | 2026-09-10 → 2027-02-24 (+167d) |  |  |  |
| RHD4CZ6C062ST1104 | Excavation works for GRP Pipe Line 800 mm - (RD-C-6 /2)-Z6-C062-ST | 2026-08-31 → 2026-08-05 A (-26d) | 2026-09-01 → 2026-08-06 A (-26d) |  | 0% → 100% | resources Skilled labor [9.37 h]; Unskilled Labor [9.37 h]; Equipment Opreator [11.22 h]; Excavator-Poclain [9.37 h]; Dump Truck [1.85 h]; GRP (800mm Diameter) - ST - Depth less than 1.5 m [17.19 m]; GRP (800mm Diameter) - ST - Depth: 1.51m - 2.5m → Skilled labor [9.37 h]; Unskilled Labor [9.37 h]; Equipment Opreator [11.2 h]; Excavator-Poclain [9.37 h]; Dump Truck [1.85 h]; GRP (800mm Diameter) - ST - Depth less than 1.5 m [17.19 m]; GRP (800mm Diameter) - ST - Depth: 1.51m - 2.5m |
| RHD4CZ6C062ST1204 | Bedding works for GRP Pipe Line 800 mm - (RD-C-6 /2)-Z6-C062-ST | 2026-09-02 → 2026-08-08 A (-25d) | 2026-09-03 → 2026-08-09 A (-25d) |  | 0% → 100% |  |
| RHD4CZ6C062ST1304 | Installing for GRP Pipe Line 800 mm - (RD-C-6 /2)-Z6-C062-ST | 2026-09-05 → 2026-08-09 A (-27d) | 2026-09-06 → 2026-08-10 A (-27d) |  | 0% → 100% |  |
| RHD4CZ6C062ST1504 | Backfilling and warning tape works for GRP Pipe Line 800 mm - (RD-C-6 /2)-Z6-C062-ST | 2026-09-09 → 2026-08-11 A (-29d) | 2026-09-10 → 2026-08-12 A (-29d) |  | 0% → 100% |  |
| RHD4CZ6C062ST1404 | Primary Test for GRP Pipe Line 800 mm - (RD-C-6 /2)-Z6-C062-ST | 2026-09-07 → 2027-02-23 (+169d) | 2026-09-08 → 2027-02-24 (+169d) |  |  |  |
| 5252 | **RHD4-02-002-C062-(ST)-GRP Pipes - 700 mm diameter** | 2026-08-31 → 2026-08-04 (-27d) | 2026-09-13 → 2027-02-24 (+164d) |  |  |  |
| RHD4CZ6C062ST1103 | Excavation works for GRP Pipe Line 700 mm - (RD-C-6 /2)-Z6-C062-ST | 2026-08-31 → 2026-08-04 A (-27d) | 2026-09-01 → 2026-08-05 A (-27d) |  | 0% → 100% |  |
| RHD4CZ6C062ST1203 | Bedding works for GRP Pipe Line 700 mm - (RD-C-6 /2)-Z6-C062-ST | 2026-09-02 → 2026-08-06 A (-27d) | 2026-09-03 → 2026-08-08 A (-26d) |  | 0% → 100% | resources Skilled labor [7.19 h]; Unskilled Labor [14.27 h]; Equipment Opreator [14.27 h]; Excavator-Poclain [7.19 h]; Dump Truck [7.19 h]; GRP (700mm Diameter) - ST - Depth less than 1.5 m [7.71 m]; GRP (700mm Diameter) - ST - Depth: 1.51m - 2.5m → Skilled labor [7.2 h]; Unskilled Labor [14.27 h]; Equipment Opreator [14.27 h]; Excavator-Poclain [7.2 h]; Dump Truck [7.2 h]; GRP (700mm Diameter) - ST - Depth less than 1.5 m [7.71 m]; GRP (700mm Diameter) - ST - Depth: 1.51m - 2.5m |
| RHD4CZ6C062ST1303 | Installing for GRP Pipe Line 700 mm - (RD-C-6 /2)-Z6-C062-ST | 2026-09-05 → 2026-08-09 A (-27d) | 2026-09-06 → 2026-08-10 A (-27d) |  | 0% → 100% | resources Unskilled Labor [7.95 h]; Plumber [4.03 h]; GRP (700mm Diameter) - ST - Depth less than 1.5 m [69.4 m]; GRP (700mm Diameter) - ST - Depth: 1.51m - 2.5m → Unskilled Labor [7.95 h]; Plumber [4 h]; GRP (700mm Diameter) - ST - Depth less than 1.5 m [69.4 m]; GRP (700mm Diameter) - ST - Depth: 1.51m - 2.5m |
| RHD4CZ6C062ST1503 | Backfilling and warning tape works for GRP Pipe Line 700 mm - (RD-C-6 /2)-Z6-C062-ST | 2026-09-12 → 2026-08-11 A (-32d) | 2026-09-13 → 2026-08-12 A (-32d) |  | 0% → 100% | resources Skilled labor [8.39 h]; Unskilled Labor [16.77 h]; Equipment Opreator [16.77 h]; Excavator-Poclain [8.39 h]; Dump Truck [8.39 h]; GRP (700mm Diameter) - ST - Depth less than 1.5 m [30.84 m]; GRP (700mm Diameter) - ST - Depth: 1.51m - 2.5m → Skilled labor [8.39 h]; Unskilled Labor [16.8 h]; Equipment Opreator [16.8 h]; Excavator-Poclain [8.39 h]; Dump Truck [8.39 h]; GRP (700mm Diameter) - ST - Depth less than 1.5 m [30.84 m]; GRP (700mm Diameter) - ST - Depth: 1.51m - 2.5m |

| ID | Task | Start | Finish | Complete | Other |
| --- | --- | --- | --- | --- | --- |
| RHD4CZ6C062ST1403 | Primary Test for GRP Pipe Line 700 mm - (RD-C-6 /2)-Z6-C062-ST | 2026-09-07 → 2027-02-23 (+169d) | 2026-09-08 → 2027-02-24 (+169d) |  | resources Unskilled Labor [4.03 h]; Plumber [4.03 h]; Equipment Opreator [4.03 h]; Water Truck [4.03 h]; GRP (700mm Diameter) - ST - Depth less than 1.5 m [30.84 m]; GRP (700mm Diameter) - ST - Depth: 1.51m - 2.5m → Unskilled Labor [4 h]; Plumber [4 h]; Equipment Opreator [4 h]; Water Truck [4 h]; GRP (700mm Diameter) - ST - Depth less than 1.5 m [30.84 m]; GRP (700mm Diameter) - ST - Depth: 1.51m - 2.5m |
| 5251 | **RHD4-02-002-C062-(ST)-GRP Pipes - 600 mm diameter** | 2026-08-31 → 2026-08-04 (-27d) | 2026-09-15 → 2027-02-24 (+162d) |  |  |
| RHD4CZ6C062ST1102 | Excavation works for GRP Pipe Line 600 mm - (RD-C-6 /2)-Z6-C062-ST | 2026-08-31 → 2026-08-04 A (-27d) | 2026-09-01 → 2026-08-05 A (-27d) | 0% → 100% |  |
| RHD4CZ6C062ST1202 | Bedding works for GRP Pipe Line 600 mm - (RD-C-6 /2)-Z6-C062-ST | 2026-09-02 → 2026-08-06 A (-27d) | 2026-09-03 → 2026-08-08 A (-26d) | 0% → 100% |  |
| RHD4CZ6C062ST1302 | Installing for GRP Pipe Line 600 mm - (RD-C-6 /2)-Z6-C062-ST | 2026-09-05 → 2026-08-09 A (-27d) | 2026-09-06 → 2026-08-10 A (-27d) | 0% → 100% | resources Unskilled Labor [27.33 h]; Plumber [13.61 h]; GRP (600mm Diameter) - ST - Depth less than 1.5 m [95.36 m]; GRP (600mm Diameter) - ST - Depth: 1.51m - 2.5m → Unskilled Labor [27.33 h]; Plumber [13.6 h]; GRP (600mm Diameter) - ST - Depth less than 1.5 m [95.36 m]; GRP (600mm Diameter) - ST - Depth: 1.51m - 2.5m |
| RHD4CZ6C062ST1502 | Backfilling and warning tape works for GRP Pipe Line 600 mm - (RD-C-6 /2)-Z6-C062-ST | 2026-09-14 → 2026-08-11 A (-34d) | 2026-09-15 → 2026-08-12 A (-34d) | 0% → 100% |  |
| RHD4CZ6C062ST1402 | Primary Test for GRP Pipe Line 600 mm - (RD-C-6 /2)-Z6-C062-ST | 2026-09-07 → 2027-02-23 (+169d) | 2026-09-08 → 2027-02-24 (+169d) |  |  |
| 5250 | **RHD4-02-002-C062-(ST)-GRP Pipes - 500 mm diameter** | 2026-08-31 → 2026-08-04 (-27d) | 2026-09-17 → 2027-02-24 (+160d) |  |  |
| RHD4CZ6C062ST1101 | Excavation works for GRP Pipe Line 500 mm - (RD-C-6 /2)-Z6-C062-ST | 2026-08-31 → 2026-08-04 A (-27d) | 2026-09-01 → 2026-08-05 A (-27d) | 0% → 100% |  |
| RHD4CZ6C062ST1201 | Bedding works for GRP Pipe Line 500 mm - (RD-C-6 /2)-Z6-C062-ST | 2026-09-02 → 2026-08-06 A (-27d) | 2026-09-03 → 2026-08-08 A (-26d) | 0% → 100% |  |
| RHD4CZ6C062ST1301 | Installing for GRP Pipe Line 500 mm - (RD-C-6 /2)-Z6-C062-ST | 2026-09-05 → 2026-08-09 A (-27d) | 2026-09-06 → 2026-08-10 A (-27d) | 0% → 100% |  |
| RHD4CZ6C062ST1501 | Backfilling and warning tape works for GRP Pipe Line 500 mm - (RD-C-6 /2)-Z6-C062-ST | 2026-09-16 → 2026-08-11 A (-36d) | 2026-09-17 → 2026-08-12 A (-36d) | 0% → 100% |  |
| RHD4CZ6C062ST1401 | Primary Test for GRP Pipe Line 500 mm - (RD-C-6 /2)-Z6-C062-ST | 2026-09-07 → 2027-02-23 (+169d) | 2026-09-08 → 2027-02-24 (+169d) |  |  |
| 5249 | **RHD4-02-002-C062-(ST)-GRP Pipes - 400 mm diameter** | 2026-08-31 → 2026-08-04 (-27d) | 2026-09-20 → 2027-02-24 (+157d) |  |  |
| RHD4CZ6C062ST1100 | Excavation works for GRP Pipe Line 400 mm - (RD-C-6 /2)-Z6-C062-ST | 2026-08-31 → 2026-08-04 A (-27d) | 2026-09-01 → 2026-08-05 A (-27d) | 0% → 100% | resources Skilled labor [13.61 h]; Unskilled Labor [13.61 h]; Equipment Opreator [16.34 h]; Excavator-Poclain [13.61 h]; Dump Truck [2.72 h]; GRP (400mm Diameter) - ST - Depth less than 1.5 m [30.27 m]; GRP (400mm Diameter) - ST - Depth: 1.51m - 2.5 m → Skilled labor [13.6 h]; Unskilled Labor [13.6 h]; Equipment Opreator [16.34 h]; Excavator-Poclain [13.6 h]; Dump Truck [2.72 h]; GRP (400mm Diameter) - ST - Depth less than 1.5 m [30.27 m]; GRP (400mm Diameter) - ST - Depth: 1.51m - 2.5 m |
| RHD4CZ6C062ST1200 | Bedding works for GRP Pipe Line 400 mm - (RD-C-6 /2)-Z6-C062-ST | 2026-09-02 → 2026-08-06 A (-27d) | 2026-09-03 → 2026-08-08 A (-26d) | 0% → 100% |  |
| RHD4CZ6C062ST1300 | Installing for GRP Pipe Line 400 mm - (RD-C-6 /2)-Z6-C062-ST | 2026-09-05 → 2026-08-09 A (-27d) | 2026-09-06 → 2026-08-10 A (-27d) | 0% → 100% |  |
| RHD4CZ6C062ST1500 | Backfilling and warning tape works for GRP Pipe Line 400 mm - (RD-C-6 /2)-Z6-C062-ST | 2026-09-19 → 2026-08-11 A (-39d) | 2026-09-20 → 2026-08-12 A (-39d) | 0% → 100% |  |
| RHD4CZ6C062ST1400 | Primary Test for GRP Pipe Line 400 mm - (RD-C-6 /2)-Z6-C062-ST | 2026-09-07 → 2027-02-23 (+169d) | 2026-09-08 → 2027-02-24 (+169d) |  |  |
| 5272 | **RHD4-02-002-Z6-C062-Catch Basin - ST** | 2026-09-02 → 2026-08-04 (-29d) | 2026-10-17 → 2027-04-11 (+176d) |  |  |
| 5273 | **RHD4-02-002-C062-(ST)-Single Catch Basin Works** | 2026-09-02 → 2026-08-04 (-29d) | 2026-10-17 → 2027-04-11 (+176d) |  |  |
| RHD4CZ6C062ST7100 | Excavation works for Single Catch Basin - (RD-C-6 /2)-Z6-C062-ST | 2026-09-02 → 2026-08-04 A (-29d) | 2026-09-08 → 2027-03-01 (+174d) | 0% → 88% |  |
| RHD4CZ6C062ST7200 | PC Blinding, Installation and Pipe connection for Single Catch Basin - (RD-C-6 /2)-Z6-C062-ST | 2026-09-09 → 2026-08-06 A (-34d) | 2026-09-15 → 2027-03-08 (+174d) | 0% → 82% |  |
| RHD4CZ6C062ST7300 | Rings & C.Slab & Final Backfill for Single Catch Basin - (RD-C-6 /2)-Z6-C062-ST | 2026-09-16 → 2027-03-13 (+178d) | 2026-09-26 → 2027-03-21 (+176d) |  | resources Skilled labor [77.65 h]; Unskilled Labor [155.19 h]; Equipment Opreator [93.11 h]; Boom Truck [15.57 h]; Bobcat [77.65 h]; Single Catch basin - ST [19.95 nr] → Skilled labor [77.65 h]; Unskilled Labor [155.2 h]; Equipment Opreator [93.11 h]; Boom Truck [15.57 h]; Bobcat [77.65 h]; Single Catch basin - ST [19.95 nr] |
| RHD4CZ6C062ST7400 | Steel Cover for Single Catch Basin - (RD-C-6 /2)-Z6-C062-ST | 2026-09-27 → 2027-03-22 (+176d) | 2026-10-03 → 2027-03-28 (+176d) |  |  |
| RHD4CZ6C062ST7500 | Finishing and Insulation works for Single Catch Basin - (RD-C-6 /2)-Z6-C062-ST | 2026-10-04 → 2027-03-29 (+176d) | 2026-10-17 → 2027-04-11 (+176d) |  | resources Skilled labor [124.15 h]; Unskilled Labor [248.3 h]; Equipment Opreator [24.83 h]; Boom Truck [24.83 h]; Single Catch basin - ST [8.55 nr] → Skilled labor [124.15 h]; Unskilled Labor [248.3 h]; Equipment Opreator [24.8 h]; Boom Truck [24.8 h]; Single Catch basin - ST [8.55 nr] |
| 5274 | **RHD4-02-002-C062-(ST)-Double Catch Basin Works** | 2026-09-09 → 2026-09-19 (+10d) | 2026-09-20 → 2027-03-16 (+177d) |  |  |
| RHD4CZ6C062ST8100 | Excavation works for Double Catch Basin - (RD-C-6 /2)-Z6-C062-ST | 2026-09-09 → 2026-09-19 A (+10d) | 2026-09-10 → 2027-03-03 (+174d) | 0% → 50% |  |
| RHD4CZ6C062ST8200 | PC Blinding, Installation and Pipe connection for Double Catch Basin - (RD-C-6 /2)-Z6-C062-ST | 2026-09-12 → 2026-09-21 A (+9d) | 2026-09-13 → 2027-03-06 (+174d) | 0% → 50% |  |
| RHD4CZ6C062ST8300 | Rings & C.Slab & Final Backfillfor Double Catch Basin - (RD-C-6 /2)-Z6-C062-ST | 2026-09-14 → 2027-03-07 (+174d) | 2026-09-15 → 2027-03-08 (+174d) |  |  |
| RHD4CZ6C062ST8400 | Steel Cover for Double Catch Basin - (RD-C-6 /2)-Z6-C062-ST | 2026-09-16 → 2027-03-13 (+178d) | 2026-09-17 → 2027-03-14 (+178d) |  |  |
| RHD4CZ6C062ST8500 | Finishing and Insulation works for Double Catch Basin - (RD-C-6 /2)-Z6-C062-ST | 2026-09-19 → 2027-03-15 (+177d) | 2026-09-20 → 2027-03-16 (+177d) |  |  |
| 5264 | **RHD4-02-002-C062-(ST)-UPVC Pipes - 400 mm diameter** | 2026-09-09 → 2027-03-02 (+174d) | 2026-09-28 → 2027-03-23 (+176d) |  |  |
| RHD4CZ6C062ST2101 | Excavation works for UPVC Pipe Line 400 mm - (RD-C-6 /2)-Z6-C062-ST | 2026-09-09 → 2027-03-02 (+174d) | 2026-09-10 → 2027-03-03 (+174d) |  |  |
| RHD4CZ6C062ST2201 | Bedding works for UPVC Pipe Line 400 mm - (RD-C-6 /2)-Z6-C062-ST | 2026-09-12 → 2027-03-04 (+173d) | 2026-09-13 → 2027-03-06 (+174d) |  |  |
| RHD4CZ6C062ST2301 | Installing for UPVC Pipe Line 400 mm - (RD-C-6 /2)-Z6-C062-ST | 2026-09-14 → 2027-03-07 (+174d) | 2026-09-15 → 2027-03-08 (+174d) |  |  |
| RHD4CZ6C062ST2401 | Primary Test for UPVC Pipe Line 400 mm - (RD-C-6 /2)-Z6-C062-ST | 2026-09-16 → 2027-03-13 (+178d) | 2026-09-17 → 2027-03-14 (+178d) |  |  |
| RHD4CZ6C062ST2501 | Backfilling and warning tape works for UPVC Pipe Line 400 mm - (RD-C-6 /2)-Z6-C062-ST | 2026-09-27 → 2027-03-22 (+176d) | 2026-09-28 → 2027-03-23 (+176d) |  |  |
| 5263 | **RHD4-02-002-C062-(ST)-UPVC Pipes - 300 mm diameter** | 2026-09-12 → 2026-08-04 (-39d) | 2026-10-05 → 2027-03-30 (+176d) |  |  |
| RHD4CZ6C062ST2100 | Excavation works for UPVC Pipe Line 300 mm - (RD-C-6 /2)-Z6-C062-ST | 2026-09-12 → 2026-08-04 A (-39d) | 2026-09-15 → 2027-03-08 (+174d) | 0% → 71% |  |
| RHD4CZ6C062ST2200 | Bedding works for UPVC Pipe Line 300 mm - (RD-C-6 /2)-Z6-C062-ST | 2026-09-16 → 2026-08-06 A (-41d) | 2026-09-20 → 2027-03-16 (+177d) | 0% → 71% |  |
| RHD4CZ6C062ST2300 | Installing for UPVC Pipe Line 300 mm - (RD-C-6 /2)-Z6-C062-ST | 2026-09-21 → 2026-08-09 A (-43d) | 2026-09-26 → 2027-03-21 (+176d) | 0% → 65% |  |
| RHD4CZ6C062ST2400 | Primary Test for UPVC Pipe Line 300 mm - (RD-C-6 /2)-Z6-C062-ST | 2026-09-27 → 2027-03-22 (+176d) | 2026-09-29 → 2027-03-24 (+176d) |  |  |
| RHD4CZ6C062ST2500 | Backfilling and warning tape works for UPVC Pipe Line 300 mm - (RD-C-6 /2)-Z6-C062-ST | 2026-09-30 → 2027-03-25 (+176d) | 2026-10-05 → 2027-03-30 (+176d) |  |  |
| 5271 | **RHD4-02-002-C062-(ST)-Concrete Encasement** | 2026-09-24 → 2027-03-20 (+177d) | 2026-09-26 → 2027-03-21 (+176d) |  |  |
| RHD4CZ6C062ST6100 | Pipe Encasement for Storm Pipelines - (RD-C-6 /2)-Z6-C062-ST | 2026-09-24 → 2027-03-20 (+177d) | 2026-09-26 → 2027-03-21 (+176d) |  | resources Skilled labor [8.71 h]; Unskilled Labor [8.71 h]; Equipment Opreator [9.58 h]; Concrete Mixer Truck [0.87 h]; Dump Truck [8.71 h]; Pipe Encasement - ST [160.85 m3] → Skilled labor [8.71 h]; Unskilled Labor [8.71 h]; Equipment Opreator [9.6 h]; Concrete Mixer Truck [0.87 h]; Dump Truck [8.71 h]; Pipe Encasement - ST [160.85 m3] |
| 4299 | **RHD4-02-002-Z6-C062-Concrete Box Culvert - ST** |  | 2026-05-12 → 2026-12-01 (+203d) |  |  |
| 4300 | **RHD4-02-002-C062-(ST)-Concrete Box Culvert** |  | 2026-05-12 → 2026-12-01 (+203d) |  |  |
| RHD4CZ6C062ST4100 | Excavation works for Box Culvert - (RD-C-6/2)-Z6-C062-ST(Completed) | 2026-02-01 A | 2026-03-29 → 2026-07-16 A (+109d) | 0% → 100% |  |
| RHD4CZ6C062ST4200 | PC works for Box Culvert - (RD-C-6/2)-Z6-C062-ST(Completed) | 2026-02-01 A | 2026-03-25 → 2026-06-20 A (+87d) | 0% → 100% | resources Skilled labor [3.16 h]; Unskilled Labor [3.16 h]; Equipment Opreator [3.16 h]; Concrete Mixer Truck [1.63 h]; Concrete Pump [1.63 h]; 100 mm thickness lean concrete under the base - ST [1166.55 m2] → Skilled labor [3.16 h]; Unskilled Labor [3.16 h]; Equipment Opreator [3.16 h]; Concrete Mixer Truck [1.6 h]; Concrete Pump [1.6 h]; 100 mm thickness lean concrete under the base - ST [1166.55 m2] |
| RHD4CZ6C062ST4400 | Raft works for Box Culvert - (RD-C-6/2)-Z6-C062-ST(Completed) | 2026-02-01 A | 2026-02-25 → 2026-07-23 A (+148d) | 0% → 100% |  |
| RHD4CZ6C062ST4500 | Wall and slab works for Box Culvert - (RD-C-6/2)-Z6-C062-ST | 2026-03-30 A | 2026-04-06 → 2026-09-23 A (+170d) | 0% → 100% |  |
| RHD4CZ6C062ST4600 | Insulation and Testing for Box Culvert - (RD-C-6/2)-Z6-C062-ST | 2026-04-26 → 2026-09-19 A (+146d) | 2026-05-02 → 2026-10-03 A (+154d) | 0% → 100% |  |
| RHD4CZ6C062ST4700 | Backfilling works for Box Culvert - (RD-C-6/2)-Z6-C062-ST | 2026-05-03 → 2026-11-22 (+203d) | 2026-05-12 → 2026-12-01 (+203d) |  |  |
| 4301 | **RHD4-02-002-C062-(ST)-Concrete Chambers** | 2026-04-07 → 2026-08-20 (+135d) | 2026-04-25 → 2026-11-21 (+210d) |  |  |
| RHD4CZ6C062ST5100 | Excavation and Bedding for Concrete Chambers - for Box Culvert - (RD-C-6/2)-Z6-C062-ST | 2026-04-07 → 2026-08-20 A (+135d) | 2026-04-11 → 2026-11-07 (+210d) | 0% → 50% |  |
| RHD4CZ6C062ST5200 | PC works for Concrete Chambers - for Box Culvert - (RD-C-6/2)-Z6-C062-ST | 2026-04-12 → 2026-08-25 A (+135d) | 2026-04-15 → 2026-11-11 (+210d) | 0% → 50% |  |
| RHD4CZ6C062ST5300 | Installation for Concrete Chambers - for Box Culvert - (RD-C-6/2)-Z6-C062-ST | 2026-04-16 → 2026-08-30 A (+136d) | 2026-04-20 → 2026-11-16 (+210d) | 0% → 50% |  |
| RHD4CZ6C062ST5400 | Backfilling works for Concrete Chambers - for Box Culvert - (RD-C-6/2)-Z6-C062-ST | 2026-04-21 → 2026-11-17 (+210d) | 2026-04-25 → 2026-11-21 (+210d) |  |  |
| 5297 | **RHD4-02-002-Z6-C062-Sewage Network - SW** | 2026-10-22 → 2026-08-08 (-75d) | 2026-12-15 → 2027-05-23 (+159d) |  |  |
| 4551 | **RHD4-02-002-C062-(SW)-MH Works - 1200 mm diameter with Back drop** | 2026-10-22 → 2026-08-11 (-72d) | 2026-11-02 → 2027-04-22 (+171d) |  |  |
| RHD4CZ6C062SW3101 | Excavation and PC Blinding works for MH 1200 mm - (RD-C-6 /2)-Z6-C062-SW | 2026-10-22 → 2026-08-11 A (-72d) | 2026-10-24 → 2026-08-12 A (-73d) | 0% → 100% |  |
| RHD4CZ6C062SW3201 | Installation of Base for MH 1200 mm - (RD-C-6 /2)-Z6-C062-SW | 2026-10-25 → 2026-09-20 A (-35d) | 2026-10-26 → 2026-09-22 A (-34d) | 0% → 100% |  |
| RHD4CZ6C062SW3301 | MH Ring and C.Slab works and Backfilling works for MH 1200 mm - (RD-C-6 /2)-Z6-C062-SW | 2026-10-27 → 2027-04-17 (+172d) | 2026-10-28 → 2027-04-18 (+172d) |  | resources Skilled labor [5.45 h]; Unskilled Labor [5.45 h]; Equipment Opreator [3.81 h]; Boom Truck [2.18 h]; Concrete Mixer Truck [1.63 h]; MH (1200mm Diameter) - SW - depth 2.51- 3.5 m with back drop [0.35 nr] → Skilled labor [5.45 h]; Unskilled Labor [5.45 h]; Equipment Opreator [3.81 h]; Boom Truck [2.18 h]; Concrete Mixer Truck [1.6 h]; MH (1200mm Diameter) - SW - depth 2.51- 3.5 m with back drop [0.35 nr] |
| RHD4CZ6C062SW3401 | Steel Cover for MH 1200 mm - (RD-C-6 /2)-Z6-C062-SW | 2026-10-29 → 2027-04-19 (+172d) | 2026-10-31 → 2027-04-20 (+171d) |  | resources Skilled labor [3.59 h]; Unskilled Labor [7.3 h]; Equipment Opreator [0.76 h]; Boom Truck [0.76 h]; MH (1200mm Diameter) - SW - depth 2.51- 3.5 m with back drop [0.05 nr] → Skilled labor [3.59 h]; Unskilled Labor [7.3 h]; Equipment Opreator [0.8 h]; Boom Truck [0.8 h]; MH (1200mm Diameter) - SW - depth 2.51- 3.5 m with back drop [0.05 nr] |
| RHD4CZ6C062SW3501 | Finishing, Benching, Testing works for MH 1200 mm - (RD-C-6 /2)-Z6-C062-SW | 2026-11-01 → 2027-04-21 (+171d) | 2026-11-02 → 2027-04-22 (+171d) |  |  |
| 5307 | **RHD4-02-002-C062-(SW)-MH Works - 1200 mm diameter** | 2026-10-31 → 2026-08-08 (-84d) | 2026-12-15 → 2027-05-23 (+159d) |  |  |
| RHD4CZ6C062SW3100 | Excavation and PC Blinding works for MH 1200 mm - (RD-C-6 /2)-Z6-C062-SW | 2026-10-31 → 2026-08-08 A (-84d) | 2026-11-05 → 2027-04-18 (+164d) | 0% → 72% |  |
| RHD4CZ6C062SW3200 | Installation of Base for MH 1200 mm - (RD-C-6 /2)-Z6-C062-SW | 2026-11-07 → 2026-08-10 A (-89d) | 2026-11-17 → 2027-04-20 (+154d) | 0% → 70% |  |
| RHD4CZ6C062SW3300 | MH Ring and C.Slab works and Backfilling works for MH 1200 mm - (RD-C-6 /2)-Z6-C062-SW | 2026-11-18 → 2027-04-21 (+154d) | 2026-11-29 → 2027-05-02 (+154d) |  |  |

| ID | Task | Start | Finish | Complete | Other |
| --- | --- | --- | --- | --- | --- |
| RHD4CZ6C062SW3400 | Steel Cover for MH 1200 mm - (RD-C-6 /2)-Z6-C062-SW | 2026-11-30 → 2027-05-03 (+154d) | 2026-12-03 → 2027-05-06 (+154d) |  | resources Skilled labor [39.97 h]; Unskilled Labor [79.83 h]; Equipment Opreator [7.95 h]; Boom Truck [7.95 h]; MH (1200mm Diameter) - SW - depth 1.51 - 2.5m [0.1 nr]; MH (1200mm Diameter) - SW - depth 2.51 - 3.5m [0.45 nr] → Skilled labor [40 h]; Unskilled Labor [79.83 h]; Equipment Opreator [7.95 h]; Boom Truck [7.95 h]; MH (1200mm Diameter) - SW - depth 1.51 - 2.5m [0.1 nr]; MH (1200mm Diameter) - SW - depth 2.51 - 3.5m [0.45 nr] |
| RHD4CZ6C062SW3500 | Finishing, Benching, Testing works for MH 1200 mm - (RD-C-6 /2)-Z6-C062-SW | 2026-12-05 → 2027-05-08 (+154d) | 2026-12-15 → 2027-05-23 (+159d) |  |  |
| 5303 | **RHD4-02-002-C062-(SW)-UPVC Pipes - 200 mm diameter** | 2026-11-07 → 2026-08-11 (-88d) | 2026-11-28 → 2027-05-03 (+156d) |  |  |
| RHD4CZ6C062SW2100 | Excavation works for UPVC Pipe Line 200 mm - (RD-C-6 /2)-Z6-C062-SW | 2026-11-07 → 2026-08-11 A (-88d) | 2026-11-10 → 2026-08-22 A (-80d) | 0% → 100% |  |
| RHD4CZ6C062SW2200 | Bedding works for UPVC Pipe Line 200 mm - (RD-C-6 /2)-Z6-C062-SW | 2026-11-11 → 2026-08-12 A (-91d) | 2026-11-15 → 2026-08-23 A (-84d) | 0% → 100% |  |
| RHD4CZ6C062SW2300 | Installing for UPVC Pipe Line 200 mm - (RD-C-6 /2)-Z6-C062-SW | 2026-11-16 → 2026-08-15 A (-93d) | 2026-11-19 → 2026-09-17 A (-63d) | 0% → 100% |  |
| RHD4CZ6C062SW2500 | Backfilling and warning tape works for UPVC Pipe Line 200 mm - (RD-C-6 /2)-Z6-C062-SW | 2026-11-24 → 2026-08-17 A (-99d) | 2026-11-28 → 2026-09-19 A (-70d) | 0% → 100% |  |
| RHD4CZ6C062SW2400 | Primary Test for UPVC Pipe Line 200 mm - (RD-C-6 /2)-Z6-C062-SW | 2026-11-21 → 2027-05-01 (+161d) | 2026-11-23 → 2027-05-03 (+161d) |  |  |
| 5334 | **RHD4-02-002-Z6-C062-Potable Network - PT** | 2026-11-29 → 2026-08-04 (-117d) | 2026-12-30 → 2027-07-19 (+201d) |  |  |
| 5335 | **RHD4-02-002-C062-(PT)-HDPE Pipes - 110 mm diameter** | 2026-11-29 → 2026-08-04 (-117d) | 2026-12-09 → 2027-05-19 (+161d) |  |  |
| RHD4CZ6C062PT1100 | Excavation works for HDPE Pipline 110 mm - (RD-C-6 /2)-Z6-C062-PT | 2026-11-29 → 2026-08-04 A (-117d) | 2026-11-30 → 2027-05-05 (+156d) | 0% → 50% |  |
| RHD4CZ6C062PT1200 | Bedding works for HDPE Pipline 110 mm - (RD-C-6 /2)-Z6-C062-PT | 2026-12-01 → 2026-08-06 A (-117d) | 2026-12-02 → 2027-05-08 (+157d) |  |  |
| RHD4CZ6C062PT1300 | Installing for HDPE Pipline 110 mm - (RD-C-6 /2)-Z6-C062-PT | 2026-12-03 → 2026-08-08 A (-117d) | 2026-12-05 → 2027-05-10 (+156d) |  |  |
| RHD4CZ6C062PT1400 | Primary Test for HDPE Pipline 110 mm - (RD-C-6 /2)-Z6-C062-PT | 2026-12-06 → 2027-05-11 (+156d) | 2026-12-07 → 2027-05-12 (+156d) |  |  |
| RHD4CZ6C062PT1500 | Backfilling and warning tape works for HDPE Pipline 110 mm - (RD-C-6 /2)-Z6-C062-PT | 2026-12-08 → 2027-05-13 (+156d) | 2026-12-09 → 2027-05-19 (+161d) |  | resources Skilled labor [5.55 h]; Unskilled Labor [11.22 h]; Equipment Opreator [11.22 h]; Excavator-Poclain [5.55 h]; Dump Truck [5.55 h]; HDPE (110mm Diameter) - PT - Depth: less than 1.5m [20.52 m] → Skilled labor [5.55 h]; Unskilled Labor [11.2 h]; Equipment Opreator [11.2 h]; Excavator-Poclain [5.55 h]; Dump Truck [5.55 h]; HDPE (110mm Diameter) - PT - Depth: less than 1.5m [20.52 m] |
| 5336 | **RHD4-02-002-C062-(PT)-HDPE Pipes - 160 mm diameter** | 2026-11-29 → 2026-08-04 (-117d) | 2026-12-17 → 2027-06-02 (+167d) |  |  |
| RHD4CZ6C062PT1101 | Excavation works for HDPE Pipline 160 mm - (RD-C-6 /2)-Z6-C062-PT | 2026-11-29 → 2026-08-04 A (-117d) | 2026-12-01 → 2027-05-06 (+156d) | 0% → 13% |  |
| RHD4CZ6C062PT1201 | Bedding works for HDPE Pipline 160 mm - (RD-C-6 /2)-Z6-C062-PT | 2026-12-02 → 2026-08-29 A (-95d) | 2026-12-05 → 2027-05-20 (+166d) | 0% → 5% |  |
| RHD4CZ6C062PT1301 | Installing for HDPE Pipline 160 mm - (RD-C-6 /2)-Z6-C062-PT | 2026-12-06 → 2026-09-01 A (-96d) | 2026-12-10 → 2027-05-26 (+167d) | 0% → 3% |  |
| RHD4CZ6C062PT1401 | Primary Test for HDPE Pipline 160 mm - (RD-C-6 /2)-Z6-C062-PT | 2026-12-12 → 2027-05-27 (+166d) | 2026-12-13 → 2027-05-29 (+167d) |  |  |
| RHD4CZ6C062PT1501 | Backfilling and warning tape works for HDPE Pipline 160 mm - (RD-C-6 /2)-Z6-C062-PT | 2026-12-14 → 2027-05-30 (+167d) | 2026-12-17 → 2027-06-02 (+167d) |  |  |
| 5340 | **RHD4-02-002-C062-(PT)-Gate Valves (Direct Buried)** | 2026-12-09 → 2027-05-25 (+167d) | 2026-12-13 → 2027-05-29 (+167d) |  |  |
| RHD4CZ6C062PT3100 | Installation for Direct Buried Gate Valves - (RD-C-6 /2)-Z6-C062-PT | 2026-12-09 → 2027-05-25 (+167d) | 2026-12-10 → 2027-05-26 (+167d) |  |  |
| RHD4CZ6C062PT3200 | Stem and Service box for Direct Buried Gate Valves - (RD-C-6 /2)-Z6-C062-PT | 2026-12-12 → 2027-05-27 (+166d) | 2026-12-13 → 2027-05-29 (+167d) |  |  |
| 5347 | **RHD4-02-002-C062-(PT)-Fire Hydrant** | 2026-12-19 → 2027-06-03 (+166d) | 2026-12-30 → 2027-07-19 (+201d) |  |  |
| RHD4CZ6C062PT4100 | Excavation and Bedding and Pipe Installation for Fire Hydrant - (RD-C-6 /2)-Z6-C062-PT | 2026-12-19 → 2027-06-03 (+166d) | 2026-12-21 → 2027-06-06 (+167d) |  | resources Skilled labor [27.23 h]; Unskilled Labor [27.23 h]; Plumber [27.23 h]; Equipment Opreator [13.61 h]; Excavator-Poclain [13.61 h]; 3-outlet fire hydrant (2 x 2.5 inch and 1 x 4.5 inch) in the form of a separate dry vacuum cylinder [0.5 nr] → Skilled labor [27.2 h]; Unskilled Labor [27.2 h]; Plumber [27.2 h]; Equipment Opreator [13.6 h]; Excavator-Poclain [13.6 h]; 3-outlet fire hydrant (2 x 2.5 inch and 1 x 4.5 inch) in the form of a separate dry vacuum cylinder [0.5 nr] |
| RHD4CZ6C062PT4200 | Valve Installation for Fire Hydrant - (RD-C-6 /2)-Z6-C062-PT | 2026-12-22 → 2027-06-07 (+167d) | 2026-12-23 → 2027-06-08 (+167d) |  |  |
| RHD4CZ6C062PT4300 | Stem for Fire Hydrant - (RD-C-6 /2)-Z6-C062-PT | 2026-12-24 → 2027-06-09 (+167d) | 2026-12-26 → 2027-06-10 (+166d) |  |  |
| RHD4CZ6C062PT4400 | Fire Installation for Fire Hydrant - (RD-C-6 /2)-Z6-C062-PT | 2026-12-27 → 2027-06-12 (+167d) | 2026-12-28 → 2027-06-13 (+167d) |  |  |
| RHD4CZ6C062PT4500 | Protection Barriers for Fire Hydrant - (RD-C-6 /2)-Z6-C062-PT | 2026-12-29 → 2027-07-18 (+201d) | 2026-12-30 → 2027-07-19 (+201d) |  |  |
| 5348 | **RHD4-02-002-C062-(PT)-Concrete Encasement** | 2026-12-07 → 2027-05-23 (+167d) | 2026-12-10 → 2027-05-26 (+167d) |  |  |
| RHD4CZ6C062PT5100 | Pipe Encasement for Potable Pipelines - (RD-C-6 /2)-Z6-C062-PT | 2026-12-07 → 2027-05-23 (+167d) | 2026-12-10 → 2027-05-26 (+167d) |  |  |
| 5349 | **RHD4-02-002-Z6-C062-Irrigation Network - IRR** | 2026-12-31 → 2026-08-04 (-149d) | 2027-02-08 → 2027-08-23 (+196d) |  |  |
| 5350 | **RHD4-02-002-C062-(IRR)-HDPE Pipes - 160 mm diameter** | 2026-12-31 → 2026-08-04 (-149d) | 2027-01-27 → 2026-08-31 (-149d) |  |  |
| RHD4CZ6C062IRR1100 | Excavation works for HDPE Pipline 160 mm - (RD-C-6 /2)-Z6-C062-IRR | 2026-12-31 → 2026-08-04 A (-149d) | 2027-01-06 → 2026-08-09 A (-150d) | 0% → 100% | resources Skilled labor [55.87 h]; Unskilled Labor [55.87 h]; Equipment Opreator [67.08 h]; Excavator-Poclain [55.87 h]; Dump Truck [11.22 h]; HDPE (160mm Diameter) - TSE - Depth: less than 1.5m [67.02 m]; HDPE (160mm Diameter) - TSE - Depth: more than 1.51m [14.97 m] → Skilled labor [55.87 h]; Unskilled Labor [55.87 h]; Equipment Opreator [67.08 h]; Excavator-Poclain [55.87 h]; Dump Truck [11.2 h]; HDPE (160mm Diameter) - TSE - Depth: less than 1.5m [67.02 m]; HDPE (160mm Diameter) - TSE - Depth: more than 1.51m [14.97 m] |
| RHD4CZ6C062IRR1200 | Bedding works for HDPE Pipline 160 mm - (RD-C-6 /2)-Z6-C062-IRR | 2027-01-07 → 2026-08-10 A (-150d) | 2027-01-12 → 2026-08-15 A (-150d) | 0% → 100% |  |
| RHD4CZ6C062IRR1300 | Installing for HDPE Pipline 160 mm - (RD-C-6 /2)-Z6-C062-IRR | 2027-01-13 → 2026-08-16 A (-150d) | 2027-01-19 → 2026-08-22 A (-150d) | 0% → 100% |  |
| RHD4CZ6C062IRR1400 | Primary Test for HDPE Pipline 160 mm - (RD-C-6 /2)-Z6-C062-IRR | 2027-01-20 → 2026-08-23 A (-150d) | 2027-01-21 → 2026-08-24 A (-150d) | 0% → 100% |  |
| RHD4CZ6C062IRR1500 | Backfilling and warning tape works for HDPE Pipline 160 mm - (RD-C-6 /2)-Z6-C062-IRR | 2027-01-23 → 2026-08-26 A (-150d) | 2027-01-27 → 2026-08-31 A (-149d) | 0% → 100% |  |
| 5363 | **RHD4-02-002-C062-(IRR)-Air Valve Chamber** | 2027-01-28 → 2027-08-12 (+196d) | 2027-02-06 → 2027-08-21 (+196d) |  |  |
| RHD4CZ6C062IRR2102 | Excavation and Bedding for Valve Chamber for Irrigation Network - (RD-C-6 /2)-Z6-C062-IRR | 2027-01-28 → 2027-08-12 (+196d) | 2027-01-30 → 2027-08-14 (+196d) |  |  |
| RHD4CZ6C062IRR2202 | PC works for Valve Chamber for Irrigation Network - (RD-C-6 /2)-Z6-C062-IRR | 2027-01-31 → 2027-08-15 (+196d) | 2027-02-01 → 2027-08-16 (+196d) |  |  |
| RHD4CZ6C062IRR2302 | Installation for Valve Chamber for Irrigation Network - (RD-C-6 /2)-Z6-C062-IRR | 2027-02-02 → 2027-08-17 (+196d) | 2027-02-03 → 2027-08-18 (+196d) |  |  |
| RHD4CZ6C062IRR2402 | Backfilling works for Valve Chamber for Irrigation Network - (RD-C-6 /2)-Z6-C062-IRR | 2027-02-04 → 2027-08-19 (+196d) | 2027-02-06 → 2027-08-21 (+196d) |  |  |
| 5364 | **RHD4-02-002-C062-(IRR)-Air Valves** | 2027-02-04 → 2027-08-19 (+196d) | 2027-02-08 → 2027-08-23 (+196d) |  |  |
| RHD4CZ6C062IRR3103 | Installation for Air Valves for Irrigation Network - (RD-C-6 /2)-Z6-C062-IRR | 2027-02-04 → 2027-08-19 (+196d) | 2027-02-06 → 2027-08-21 (+196d) |  |  |
| RHD4CZ6C062IRR3203 | Stem and Service box for Air Valves for Irrigation Network - (RD-C-6 /2)-Z6-C062-IRR | 2027-02-07 → 2027-08-22 (+196d) | 2027-02-08 → 2027-08-23 (+196d) |  |  |
| 6115 | **RHD4-02-002-C062-(IRR)-Gate Valves (Direct Buried)** | 2026-12-31 → 2027-07-20 (+201d) | 2027-01-04 → 2027-07-24 (+201d) |  |  |
| RHD4CZ6C062IRR3100 | Installation for Direct Buried Gate Valves - (RD-C-6 /2)-Z6-C062-IRR | 2026-12-31 → 2027-07-20 (+201d) | 2027-01-02 → 2027-07-21 (+200d) |  |  |
| RHD4CZ6C062IRR3200 | Stem and Service box for Direct Buried Gate Valves - (RD-C-6 /2)-Z6-C062-IRR | 2027-01-03 → 2027-07-22 (+200d) | 2027-01-04 → 2027-07-24 (+201d) |  |  |
| 5383 | **RHD4-02-002-Z6-C062-Medium Voltage Network - MV** | 2026-09-27 → 2027-03-17 (+171d) | 2026-11-05 → 2027-05-01 (+177d) |  |  |
| 5384 | **RHD4-02-002-C062-(MV)-Medium Voltage cable trench** | 2026-10-04 → 2027-03-29 (+176d) | 2026-10-21 → 2027-04-15 (+176d) |  |  |
| RHD4CZ6C062MV1100 | Excavation for Medium Voltage Trench - (RD-C-6 /2)-Z6-C062-MV | 2026-10-04 → 2027-03-29 (+176d) | 2026-10-12 → 2027-04-06 (+176d) |  | resources Skilled labor [80.81 h]; Unskilled Labor [161.72 h]; Equipment Opreator [242.53 h]; Excavator-Poclain [80.81 h]; Dump Truck [161.72 h]; Excavation for Trench size 120cm wide and 80cm deep (for 4 cables) [273.8 m3]; Excavation for Trench size 180cm wide and 80cm deep (for 6 cables) [245.81 m3] → Skilled labor [80.8 h]; Unskilled Labor [161.72 h]; Equipment Opreator [242.53 h]; Excavator-Poclain [80.8 h]; Dump Truck [161.72 h]; Excavation for Trench size 120cm wide and 80cm deep (for 4 cables) [273.8 m3]; Excavation for Trench size 180cm wide and 80cm deep (for 6 cables) [245.81 m3] |
| RHD4CZ6C062MV1200 | Trench Backfilling for Medium Voltage Network - (RD-C-6 /2)-Z6-C062-MV | 2026-10-13 → 2027-04-07 (+176d) | 2026-10-21 → 2027-04-15 (+176d) |  | resources Skilled labor [80.81 h]; Unskilled Labor [80.81 h]; Equipment Opreator [161.72 h]; Dump Truck [161.72 h]; Excavation for Trench size 120cm wide and 80cm deep (for 4 cables) [117.34 m3]; Excavation for Trench size 180cm wide and 80cm deep (for 6 cables) [105.35 m3] → Skilled labor [80.8 h]; Unskilled Labor [80.8 h]; Equipment Opreator [161.72 h]; Dump Truck [161.72 h]; Excavation for Trench size 120cm wide and 80cm deep (for 4 cables) [117.34 m3]; Excavation for Trench size 180cm wide and 80cm deep (for 6 cables) [105.35 m3] |
| 5385 | **RHD4-02-002-C062-(MV)-Medium Voltage duct banks** | 2026-09-27 → 2027-03-17 (+171d) | 2026-10-05 → 2027-03-25 (+171d) |  |  |
| RHD4CZ6C062MV2100 | Excavation of Duct Banks for Medium Voltage Network - (RD-C-6 /2)-Z6-C062-MV | 2026-09-27 → 2027-03-17 (+171d) | 2026-09-28 → 2027-03-18 (+171d) |  |  |
| RHD4CZ6C062MV2200 | Installation of Duct Banks for Medium Voltage Network - (RD-C-6 /2)-Z6-C062-MV | 2026-09-29 → 2027-03-20 (+172d) | 2026-09-30 → 2027-03-21 (+172d) |  |  |
| RHD4CZ6C062MV2300 | Pouring of Duct Banks for Medium Voltage Network - (RD-C-6 /2)-Z6-C062-MV | 2026-10-01 → 2027-03-22 (+172d) | 2026-10-03 → 2027-03-23 (+171d) |  |  |
| RHD4CZ6C062MV2400 | Backfilling of Duct Banks for Medium Voltage Network - (RD-C-6 /2)-Z6-C062-MV | 2026-10-04 → 2027-03-24 (+171d) | 2026-10-05 → 2027-03-25 (+171d) |  |  |
| 5386 | **RHD4-02-002-C062-(MV)-Medium Voltage cables 3Cx 500 mm²** | 2026-10-13 → 2027-04-07 (+176d) | 2026-11-05 → 2027-05-01 (+177d) |  |  |
| RHD4CZ6C062MV3100 | Installation of Medium Voltage Cables 3Cx 500 mm² - (RD-C-6 /2)-Z6-C062-MV | 2026-10-13 → 2027-04-07 (+176d) | 2026-10-21 → 2027-04-15 (+176d) |  |  |
| RHD4CZ6C062MV3200 | Joints Installation of Medium Voltage Cables 3Cx 500 mm² - (RD-C-6 /2)-Z6-C062-MV | 2026-10-22 → 2027-04-17 (+177d) | 2026-10-25 → 2027-04-19 (+176d) |  | resources Skilled labor [27.23 h]; Unskilled Labor [108.9 h]; Electrician [54.45 h]; Equipment Opreator [27.23 h]; Boom Truck [27.23 h]; Straight joints cables for 13.8 kv 3Cx 500 mm², Al /XLPE/LLDPE [5 Unit] → Skilled labor [27.2 h]; Unskilled Labor [108.9 h]; Electrician [54.45 h]; Equipment Opreator [27.2 h]; Boom Truck [27.2 h]; Straight joints cables for 13.8 kv 3Cx 500 mm², Al /XLPE/LLDPE [5 Unit] |
| RHD4CZ6C062MV3300 | Testing of Medium Voltage Cables 3Cx 500 mm² - (RD-C-6 /2)-Z6-C062-MV | 2026-10-26 → 2027-04-20 (+176d) | 2026-11-03 → 2027-04-28 (+176d) |  |  |
| RHD4CZ6C062MV3400 | Termination of Medium Voltage Cables 3Cx 500 mm² - (RD-C-6 /2)-Z6-C062-MV | 2026-11-04 → 2027-04-29 (+176d) | 2026-11-05 → 2027-05-01 (+177d) |  |  |
| 5387 | **RHD4-02-002-C062-(MV)-Medium Voltage cables 3Cx 50 mm²** | 2026-11-04 → 2027-04-29 (+176d) | 2026-11-05 → 2027-05-01 (+177d) |  |  |
| RHD4CZ6C062MV3401 | Termination of Medium Voltage Cables 3Cx 50 mm² - (RD-C-6 /2)-Z6-C062-MV | 2026-11-04 → 2027-04-29 (+176d) | 2026-11-05 → 2027-05-01 (+177d) |  |  |
| 5390 | **RHD4-02-002-Z6-C062-Low Voltage Network - LV** | 2027-01-28 → 2027-08-12 (+196d) | 2027-02-18 → 2027-09-07 (+201d) |  |  |
| 5391 | **RHD4-02-002-C062-(LV)-Low Voltage duct banks** | 2027-01-28 → 2027-08-12 (+196d) | 2027-02-07 → 2027-08-22 (+196d) |  |  |
| RHD4CZ6C062LV2100 | Excavation of Duct Banks for Low Voltage Network - (RD-C-6 /2)-Z6-C062-LV | 2027-01-28 → 2027-08-12 (+196d) | 2027-01-30 → 2027-08-14 (+196d) |  |  |
| RHD4CZ6C062LV2200 | Installation of Duct Banks for Low Voltage Network - (RD-C-6 /2)-Z6-C062-LV | 2027-01-31 → 2027-08-15 (+196d) | 2027-02-02 → 2027-08-17 (+196d) |  |  |

| ID | Task | Start | Finish | Duration | Complete | Other |
| --- | --- | --- | --- | --- | --- | --- |
| RHD4CZ6C062LV2300 | Pouring of Duct Banks for Low Voltage Network - (RD-C-6 /2)-Z6-C062-LV | 2027-02-03 → 2027-08-18 (+196d) | 2027-02-04 → 2027-08-19 (+196d) |  |  |  |
| RHD4CZ6C062LV2400 | Backfilling of Duct Banks for Low Voltage Network - (RD-C-6 /2)-Z6-C062-LV | 2027-02-06 → 2027-08-21 (+196d) | 2027-02-07 → 2027-08-22 (+196d) |  |  |  |
| 5392 | **RHD4-02-002-C062-(LV)-Low Voltage Drawpit** | 2027-02-06 → 2027-08-21 (+196d) | 2027-02-09 → 2027-08-24 (+196d) |  |  |  |
| RHD4CZ6C062LV5100 | Excavation of Drawpit size 900x900x1000mm for Low Voltage Network - (RD-C-6 /2)-Z6-C062-LV | 2027-02-06 → 2027-08-21 (+196d) | 2027-02-07 → 2027-08-22 (+196d) |  |  |  |
| RHD4CZ6C062LV5200 | Installation of Drawpit size 900x900x1000mm for Low Voltage Network - (RD-C-6 /2)-Z6-C062-LV | 2027-02-08 → 2027-08-23 (+196d) | 2027-02-09 → 2027-08-24 (+196d) |  |  |  |
| 5393 | **RHD4-02-002-C062-(LV)-Low Voltage cables** | 2027-02-10 → 2027-08-25 (+196d) | 2027-02-18 → 2027-09-07 (+201d) |  |  |  |
| RHD4CZ6C062LV3100 | Excavation for Low Voltage Cables for Low Voltage Network - (RD-C-6 /2)-Z6-C062-LV | 2027-02-10 → 2027-08-25 (+196d) | 2027-02-11 → 2027-08-29 (+199d) | 2d → 4d |  |  |
| RHD4CZ6C062LV3200 | Cable Laying of Low Voltage Cables for Low Voltage Network - (RD-C-6 /2)-Z6-C062-LV | 2027-02-13 → 2027-08-30 (+198d) | 2027-02-14 → 2027-09-01 (+199d) | 2d → 3d |  |  |
| RHD4CZ6C062LV3300 | Warning tape and Backfill for Low Voltage Cables for Low Voltage Network - (RD-C-6 /2)-Z6-C062-LV | 2027-02-15 → 2027-09-02 (+199d) | 2027-02-16 → 2027-09-05 (+201d) | 2d → 3d |  |  |
| RHD4CZ6C062LV3400 | Testing of Low Voltage Cables for Low Voltage Network - (RD-C-6 /2)-Z6-C062-LV | 2027-02-17 → 2027-09-06 (+201d) | 2027-02-18 → 2027-09-07 (+201d) |  |  |  |
| 5396 | **RHD4-02-002-Z6-C062-Street Lighting Network - SL** | 2027-02-20 → 2027-09-08 (+200d) | 2027-03-25 → 2027-10-09 (+198d) |  |  |  |
| 5399 | **RHD4-02-002-C062-(SL)-Street Lighting cables** | 2027-02-20 → 2027-09-08 (+200d) | 2027-03-04 → 2027-09-20 (+200d) |  |  |  |
| RHD4CZ6C062SL3100 | Excavation for Street Lighting Cables for Street Lighting Network - (RD-C-6 /2)-Z6-C062-SL | 2027-02-20 → 2027-09-08 (+200d) | 2027-02-23 → 2027-09-11 (+200d) |  |  |  |
| RHD4CZ6C062SL3200 | Cable Laying of Street Lighting Cables for Street Lighting Network - (RD-C-6 /2)-Z6-C062-SL | 2027-02-24 → 2027-09-12 (+200d) | 2027-02-27 → 2027-09-14 (+199d) |  |  |  |
| RHD4CZ6C062SL3300 | Warning tape and Backfill for Street Lighting Cables for Street Lighting Network - (RD-C-6 /2)-Z6-C062-SL | 2027-02-28 → 2027-09-15 (+199d) | 2027-03-02 → 2027-09-18 (+200d) |  |  |  |
| RHD4CZ6C062SL3400 | Testing of Street Lighting Cables for Street Lighting Network - (RD-C-6 /2)-Z6-C062-SL | 2027-03-03 → 2027-09-19 (+200d) | 2027-03-04 → 2027-09-20 (+200d) |  |  | resources Skilled labor [14.38 h]; Unskilled Labor [57.5 h]; Electrician [28.75 h]; Equipment Opreator [14.38 h]; Boom Truck [14.38 h]; Cable, Copper 4x10mm2/ CU/XLPE/SWA/PVC + 1x10mm2 CU/PVC [32.99 m] → Skilled labor [14.4 h]; Unskilled Labor [57.5 h]; Electrician [28.75 h]; Equipment Opreator [14.4 h]; Boom Truck [14.4 h]; Cable, Copper 4x10mm2/ CU/XLPE/SWA/PVC + 1x10mm2 CU/PVC [32.99 m] |
| 5400 | **RHD4-02-002-C062-(SL)-Street Lighting Poles** | 2027-03-06 → 2027-09-21 (+199d) | 2027-03-25 → 2027-10-09 (+198d) |  |  |  |
| RHD4CZ6C062SL1100 | Excavation for RC Base for Lighting Poles for Street Lighting Network - (RD-C-6 /2)-Z6-C062-SL | 2027-03-06 → 2027-09-21 (+199d) | 2027-03-07 → 2027-09-22 (+199d) |  |  |  |
| RHD4CZ6C062SL1200 | Installation for RC Base for Lighting Poles for Street Lighting Network - (RD-C-6 /2)-Z6-C062-SL | 2027-03-08 → 2027-09-25 (+201d) | 2027-03-13 → 2027-09-26 (+197d) |  |  |  |
| RHD4CZ6C062SL1300 | Backfill for RC Base for Lighting Poles for Street Lighting Network - (RD-C-6 /2)-Z6-C062-SL | 2027-03-14 → 2027-09-27 (+197d) | 2027-03-15 → 2027-09-28 (+197d) |  |  |  |
| RHD4CZ6C062SL1400 | Installation for Lighting Poles for Street Lighting Network - (RD-C-6 /2)-Z6-C062-SL | 2027-03-16 → 2027-09-29 (+197d) | 2027-03-18 → 2027-10-02 (+198d) |  |  |  |
| RHD4CZ6C062SL1500 | Luminaire Installation for Lighting Poles for Street Lighting Network - (RD-C-6 /2)-Z6-C062-SL | 2027-03-22 → 2027-10-05 (+197d) | 2027-03-25 → 2027-10-09 (+198d) |  |  |  |
| 5402 | **RHD4-02-002-C062-(SL)-Street Lighting Earthing System** | 2027-03-20 → 2027-10-03 (+197d) | 2027-03-21 → 2027-10-04 (+197d) |  |  |  |
| RHD4CZ6C062SL6100 | Installation of Earthing for Lighting Poles and Fedder Pillers for Street Lighting Network - (RD-C-6 /2)-Z6-C062-SL | 2027-03-20 → 2027-10-03 (+197d) | 2027-03-21 → 2027-10-04 (+197d) |  |  | resources Skilled labor [0.76 h]; Unskilled Labor [0.76 h]; Equipment Opreator [1.42 h]; Excavator-Poclain [0.76 h]; Dump Truck [0.76 h]; Including lighting poles circuits - ER [1 Unit] → Skilled labor [0.8 h]; Unskilled Labor [0.8 h]; Equipment Opreator [1.42 h]; Excavator-Poclain [0.8 h]; Dump Truck [0.8 h]; Including lighting poles circuits - ER [1 Unit] |
| 5408 | **RHD4-02-002-Z6-C062-Telecommunications Network - TC** | 2027-01-28 → 2027-08-12 (+196d) | 2027-05-09 → 2027-11-22 (+197d) |  |  |  |
| 5409 | **RHD4-02-002-C062-(TC)-Telecommunications Ducts** | 2027-03-27 → 2027-10-10 (+197d) | 2027-05-09 → 2027-11-22 (+197d) |  |  |  |
| RHD4CZ6C062TC2100 | Excavation of HDPE Ducts for Telecom Network - (RD-C-6 /2)-Z6-C062-TC | 2027-03-27 → 2027-10-10 (+197d) | 2027-04-07 → 2027-10-21 (+197d) |  |  |  |
| RHD4CZ6C062TC2200 | Installation of HDPE Ducts for Telecom Network - (RD-C-6 /2)-Z6-C062-TC | 2027-04-08 → 2027-10-23 (+198d) | 2027-04-26 → 2027-11-09 (+197d) |  |  |  |
| RHD4CZ6C062TC2400 | Backfilling of HDPE Ducts for Telecom Network - (RD-C-6 /2)-Z6-C062-TC | 2027-04-27 → 2027-11-10 (+197d) | 2027-05-09 → 2027-11-22 (+197d) |  |  |  |
| 5410 | **RHD4-02-002-C062-(TC)-Telecommunications Manholes** | 2027-04-08 → 2027-10-23 (+198d) | 2027-04-17 → 2027-10-31 (+197d) |  |  |  |
| RHD4CZ6C062TC5100 | Excavation for Manholes for Telecom Network - (RD-C-6 /2)-Z6-C062-TC | 2027-04-08 → 2027-10-23 (+198d) | 2027-04-12 → 2027-10-26 (+197d) |  |  | resources Skilled labor [13.61 h]; Unskilled Labor [13.61 h]; Equipment Opreator [10.89 h]; Excavator-Poclain [5.45 h]; Dump Truck [5.45 h]; Manhole Type 1 - TC [0.9 nr]; Manhole Type 2 - TC [0.3 nr] → Skilled labor [13.6 h]; Unskilled Labor [13.6 h]; Equipment Opreator [10.89 h]; Excavator-Poclain [5.45 h]; Dump Truck [5.45 h]; Manhole Type 1 - TC [0.9 nr]; Manhole Type 2 - TC [0.3 nr] |
| RHD4CZ6C062TC5200 | Installation of Manholes for Telecom Network - (RD-C-6 /2)-Z6-C062-TC | 2027-04-13 → 2027-10-27 (+197d) | 2027-04-17 → 2027-10-31 (+197d) |  |  | resources Skilled labor [13.61 h]; Unskilled Labor [13.61 h]; Equipment Opreator [5.45 h]; Boom Truck [5.45 h]; Manhole Type 1 - TC [5.1 nr]; Manhole Type 2 - TC [1.7 nr] → Skilled labor [13.6 h]; Unskilled Labor [13.6 h]; Equipment Opreator [5.45 h]; Boom Truck [5.45 h]; Manhole Type 1 - TC [5.1 nr]; Manhole Type 2 - TC [1.7 nr] |
| 5411 | **RHD4-02-002-C062-(TC)-Telecomminications Road Crossings** | 2027-01-28 → 2027-08-12 (+196d) | 2027-02-06 → 2027-08-21 (+196d) |  |  |  |
| RHD4CZ6C062TC3100 | Excavation for Road Crossings for Telecom Network - (RD-C-6 /2)-Z6-C062-TC | 2027-01-28 → 2027-08-12 (+196d) | 2027-01-30 → 2027-08-14 (+196d) |  |  |  |
| RHD4CZ6C062TC3200 | Installation of Road Crossings for Telecom Network - (RD-C-6 /2)-Z6-C062-TC | 2027-01-31 → 2027-08-15 (+196d) | 2027-02-01 → 2027-08-16 (+196d) |  |  |  |
| RHD4CZ6C062TC3300 | Pouring of Road Crossings for Telecom Network - (RD-C-6 /2)-Z6-C062-TC | 2027-02-02 → 2027-08-17 (+196d) | 2027-02-03 → 2027-08-18 (+196d) |  |  |  |
| RHD4CZ6C062TC3400 | Backfilling of Road Crossings for Telecom Network - (RD-C-6 /2)-Z6-C062-TC | 2027-02-04 → 2027-08-19 (+196d) | 2027-02-06 → 2027-08-21 (+196d) |  |  |  |
| 5412 | **RHD4-02-002-Z6-C062-Information and Communication Technologies - ICT** | 2027-01-28 → 2027-08-12 (+196d) | 2027-06-23 → 2028-01-02 (+193d) |  |  |  |
| 5413 | **RHD4-02-002-C062-(ICT)-Information and Communication Technologies Ducts** | 2027-05-10 → 2027-11-23 (+197d) | 2027-06-23 → 2028-01-02 (+193d) |  |  |  |
| RHD4CZ6C062ICT2100 | Excavation of HDPE Ducts for ICT Network - (RD-C-6 /2)-Z6-C062-ICT | 2027-05-10 → 2027-11-23 (+197d) | 2027-05-25 → 2027-12-04 (+193d) |  |  |  |
| RHD4CZ6C062ICT2200 | Installation of HDPE Ducts for ICT Network - (RD-C-6 /2)-Z6-C062-ICT | 2027-05-26 → 2027-12-05 (+193d) | 2027-06-12 → 2027-12-21 (+192d) |  |  |  |
| RHD4CZ6C062ICT2400 | Backfilling of HDPE Ducts for ICT Network - (RD-C-6 /2)-Z6-C062-ICT | 2027-06-13 → 2027-12-22 (+192d) | 2027-06-23 → 2028-01-02 (+193d) |  |  |  |
| 5414 | **RHD4-02-002-C062-(ICT)-Information and Communication Technologies Manholes** | 2027-05-26 → 2027-12-05 (+193d) | 2027-06-03 → 2027-12-13 (+193d) |  |  |  |
| RHD4CZ6C062ICT5100 | Excavation for Manholes for ICT Network - (RD-C-6 /2)-Z6-C062-ICT | 2027-05-26 → 2027-12-05 (+193d) | 2027-05-30 → 2027-12-08 (+192d) |  |  | resources Skilled labor [13.61 h]; Unskilled Labor [13.61 h]; Equipment Opreator [10.89 h]; Excavator-Poclain [5.45 h]; Dump Truck [5.45 h]; Manhole Type 1 - ICT [0.9 nr]; Manhole Type 2 - ICT [0.3 nr] → Skilled labor [13.6 h]; Unskilled Labor [13.6 h]; Equipment Opreator [10.89 h]; Excavator-Poclain [5.45 h]; Dump Truck [5.45 h]; Manhole Type 1 - ICT [0.9 nr]; Manhole Type 2 - ICT [0.3 nr] |
| RHD4CZ6C062ICT5200 | Installation of Manholes for ICT Network - (RD-C-6 /2)-Z6-C062-ICT | 2027-05-31 → 2027-12-09 (+192d) | 2027-06-03 → 2027-12-13 (+193d) |  |  | resources Skilled labor [13.61 h]; Unskilled Labor [13.61 h]; Equipment Opreator [5.45 h]; Boom Truck [5.45 h]; Manhole Type 1 - ICT [5.1 nr]; Manhole Type 2 - ICT [1.7 nr] → Skilled labor [13.6 h]; Unskilled Labor [13.6 h]; Equipment Opreator [5.45 h]; Boom Truck [5.45 h]; Manhole Type 1 - ICT [5.1 nr]; Manhole Type 2 - ICT [1.7 nr] |
| 5415 | **RHD4-02-002-C062-(ICT)-Information and Communication Technologies Road Crossings** | 2027-01-28 → 2027-08-12 (+196d) | 2027-02-08 → 2027-08-23 (+196d) |  |  |  |
| RHD4CZ6C062ICT3100 | Excavation for Road Crossings for ICT Network - (RD-C-6 /2)-Z6-C062-ICT | 2027-01-28 → 2027-08-12 (+196d) | 2027-01-30 → 2027-08-14 (+196d) |  |  |  |
| RHD4CZ6C062ICT3200 | Installation of Road Crossings for ICT Network - (RD-C-6 /2)-Z6-C062-ICT | 2027-02-02 → 2027-08-17 (+196d) | 2027-02-03 → 2027-08-18 (+196d) |  |  |  |
| RHD4CZ6C062ICT3300 | Pouring of Road Crossings for ICT Network - (RD-C-6 /2)-Z6-C062-ICT | 2027-02-04 → 2027-08-19 (+196d) | 2027-02-06 → 2027-08-21 (+196d) |  |  |  |
| RHD4CZ6C062ICT3400 | Backfilling of Road Crossings for ICT Network - (RD-C-6 /2)-Z6-C062-ICT | 2027-02-07 → 2027-08-22 (+196d) | 2027-02-08 → 2027-08-23 (+196d) |  |  |  |
| 4677 | **RHD4-02-002-Z6-A015** |  | 2027-07-12 → 2028-01-24 (+196d) |  |  |  |
| 4856 | **RHD4-02-002-Z6-A015-Road Works - RD** | 2026-08-24 → 2026-06-02 (-83d) | 2027-07-12 → 2028-01-24 (+196d) |  |  |  |
| 4857 | **RHD4-02-002-A015-(RD)-Subgrade** | 2026-08-24 → 2026-06-02 (-83d) | 2026-08-27 → 2026-06-21 (-67d) |  |  |  |
| RHD4CZ6A015RD1100 | Supply, lay and compaction subgrade compacted thickness 300 mm for Roads - (RD-A-1 /5)-Z6-A015-RD | 2026-08-24 → 2026-06-02 A (-83d) | 2026-08-27 → 2026-06-21 A (-67d) |  | 0% → 100% |  |
| 4858 | **RHD4-02-002-A015-(RD)-Aggregate Base Course** |  | 2026-09-01 → 2026-09-24 (+23d) |  |  |  |
| RHD4CZ6A015RD2100 | Supply, lay and compaction Aggregate base course compacted thickness 300 mmfor Roads - (RD-A-1 /5)-Z6-A015-RD | 2026-08-29 A | 2026-09-01 → 2026-09-24 A (+23d) |  | 0% → 100% | resources Skilled labor [46.07 h]; Unskilled Labor [92.13 h]; Equipment Opreator [583.4 h]; Water Truck [30.38 h]; Roller compactor [92.13 h]; Grader [92.13 h]; Dump Truck [368.64 h]; Aggregate Base Courses [3758.35 m3] → Skilled labor [46.07 h]; Unskilled Labor [92.13 h]; Equipment Opreator [583.4 h]; Water Truck [30.4 h]; Roller compactor [92.13 h]; Grader [92.13 h]; Dump Truck [368.64 h]; Aggregate Base Courses [3758.35 m3] |
| 4859 | **RHD4-02-002-A015-(RD)-Bituminous base course Two Layers, including (MC1)&(RC2)** |  | 2027-06-22 → 2028-01-04 (+196d) |  |  |  |
| RHD4CZ6A015RD3100 | Supply, lay and Asphaltic base course including Prime Coat (MC1) for 1st Layer - (RD-A-1 /5)-Z6-A015-RD | 2026-09-02 A | 2026-09-06 → 2026-10-03 A (+27d) |  | 0% → 100% |  |
| RHD4CZ6A015RD3200 | Supply, lay and Asphaltic base course including Tack Coat (RC2) for 2nd Layer - (RD-A-1 /5)-Z6-A015-RD | 2027-06-19 → 2028-01-01 (+196d) | 2027-06-22 → 2028-01-04 (+196d) |  |  |  |
| 4861 | **RHD4-02-002-A015-(RD)-Precast Concrete Curb** | 2027-06-23 → 2028-01-05 (+196d) | 2027-06-30 → 2028-01-12 (+196d) |  |  |  |
| RHD4CZ6A015RD5100 | Supply and installation Precast Concrete Kerb for Roads - (RD-A-1 /5)-Z6-A015-RD | 2027-06-23 → 2028-01-05 (+196d) | 2027-06-30 → 2028-01-12 (+196d) |  |  |  |
| 4864 | **RHD4-02-002-A015-(RD)-Traffic Signage** | 2027-07-01 → 2028-01-13 (+196d) | 2027-07-07 → 2028-01-19 (+196d) |  |  |  |
| RHD4CZ6A015RD8100 | Installation of Traffic Signage for Road Network - (RD-A-1 /5)-Z6-A015-RD | 2027-07-01 → 2028-01-13 (+196d) | 2027-07-07 → 2028-01-19 (+196d) |  |  |  |
| 4860 | **RHD4-02-002-A015-(RD)-Bituminous concrete wearing course including tack coat (RC2)** | 2027-07-01 → 2028-01-13 (+196d) | 2027-07-03 → 2028-01-15 (+196d) |  |  |  |
| RHD4CZ6A015RD4100 | Supply, lay and compaction Asphaltic wearing course including tack Coat (RC2)for Road Network - (RD-A-1 /5)-Z6-A015-RD | 2027-07-01 → 2028-01-13 (+196d) | 2027-07-03 → 2028-01-15 (+196d) |  |  |  |
| 4863 | **RHD4-02-002-A015-(RD)-Pavement Marking** | 2027-07-08 → 2028-01-20 (+196d) | 2027-07-12 → 2028-01-24 (+196d) |  |  |  |
| RHD4CZ6A015RD7100 | Pavement Markings for Road Network - (RD-A-1 /5)-Z6-A015-RD | 2027-07-08 → 2028-01-20 (+196d) | 2027-07-12 → 2028-01-24 (+196d) |  |  |  |
| 4681 | **RHD4-02-002-Z6-A015-Storm Network - ST** |  | 2026-11-08 → 2027-03-28 (+140d) |  |  |  |
| 4699 | **RHD4-02-002-A015-(ST)-MH Works - 1500 mm diameter** |  | 2026-07-12 → 2027-01-13 (+185d) |  |  |  |
| RHD4CZ6A015ST3101 | Excavation and PC Blinding works for MH 1500 mm - (RD-A-1 /5)-Z6-A015-ST | 2026-05-19 A | 2026-05-20 → 2026-08-06 A (+78d) |  | 0% → 100% |  |

| ID | Task | Start | Finish | Complete | Other |
| --- | --- | --- | --- | --- | --- |
| RHD4CZ6A015ST3201 | Installation of Base for MH 1500 mm - (RD-A-1 /5)-Z6-A015-ST | 2026-05-21 A | 2026-05-23 → 2026-08-09 A (+78d) | 0% → 100% |  |
| RHD4CZ6A015ST3301 | MH Ring and C.Slab works and Backfilling works for MH 1500 mm - (RD-A-1 /5)-Z6-A015-ST | 2026-05-24 A | 2026-05-25 → 2026-09-06 A (+104d) | 0% → 100% | resources Skilled labor [5.45 h]; Unskilled Labor [5.45 h]; Equipment Opreator [3.81 h]; Boom Truck [2.18 h]; Concrete Mixer Truck [1.63 h]; MH (1500mm Diameter) - ST - depth 1.50 - 2.5m [0.35 nr] → Skilled labor [5.45 h]; Unskilled Labor [5.45 h]; Equipment Opreator [3.81 h]; Boom Truck [2.18 h]; Concrete Mixer Truck [1.6 h]; MH (1500mm Diameter) - ST - depth 1.50 - 2.5m [0.35 nr] |
| RHD4CZ6A015ST3401 | Steel Cover for MH 1500 mm - (RD-A-1 /5)-Z6-A015-ST | 2026-07-04 → 2027-01-10 (+190d) | 2026-07-05 → 2027-01-11 (+190d) |  | resources Skilled labor [3.59 h]; Unskilled Labor [7.3 h]; Equipment Opreator [0.76 h]; Boom Truck [0.76 h]; MH (1500mm Diameter) - ST - depth 1.50 - 2.5m [0.05 nr] → Skilled labor [3.59 h]; Unskilled Labor [7.3 h]; Equipment Opreator [0.8 h]; Boom Truck [0.8 h]; MH (1500mm Diameter) - ST - depth 1.50 - 2.5m [0.05 nr] |
| RHD4CZ6A015ST3501 | Finishing, Benching, Testing works for MH 1500 mm - (RD-A-1 /5)-Z6-A015-ST | 2026-07-11 → 2027-01-12 (+185d) | 2026-07-12 → 2027-01-13 (+185d) |  |  |
| 4698 | **RHD4-02-002-A015-(ST)-MH Works - 1200 mm diameter** |  | 2026-11-08 → 2027-03-28 (+140d) |  |  |
| RHD4CZ6A015ST3100 | Excavation and PC Blinding works for MH 1200 mm - (RD-A-1 /5)-Z6-A015-ST | 2026-05-21 A | 2026-05-30 → 2026-08-06 A (+68d) | 0% → 100% |  |
| RHD4CZ6A015ST3200 | Installation of Base for MH 1200 mm - (RD-A-1 /5)-Z6-A015-ST | 2026-05-31 A | 2026-06-04 → 2026-08-28 A (+85d) | 0% → 100% |  |
| RHD4CZ6A015ST3300 | MH Ring and C.Slab works and Backfilling works for MH 1200 mm - (RD-A-1 /5)-Z6-A015-ST | 2026-06-06 A | 2026-06-10 → 2026-09-09 A (+91d) | 0% → 100% |  |
| RHD4CZ6A015ST3400 | Steel Cover for MH 1200 mm - (RD-A-1 /5)-Z6-A015-ST | 2026-10-28 → 2027-03-17 (+140d) | 2026-11-02 → 2027-03-22 (+140d) |  | resources Skilled labor [50.86 h]; Unskilled Labor [101.61 h]; Equipment Opreator [10.13 h]; Boom Truck [10.13 h]; MH (1200mm Diameter) - ST - depth 1.50 - 2.5m [0.7 nr] → Skilled labor [50.86 h]; Unskilled Labor [101.6 h]; Equipment Opreator [10.13 h]; Boom Truck [10.13 h]; MH (1200mm Diameter) - ST - depth 1.50 - 2.5m [0.7 nr] |
| RHD4CZ6A015ST3500 | Finishing, Benching, Testing works for MH 1200 mm - (RD-A-1 /5)-Z6-A015-ST | 2026-11-03 → 2027-03-23 (+140d) | 2026-11-08 → 2027-03-28 (+140d) |  | resources Skilled labor [50.86 h]; Unskilled Labor [101.61 h]; Plumber [50.86 h]; Equipment Opreator [10.13 h]; Water Truck [10.13 h]; MH (1200mm Diameter) - ST - depth 1.50 - 2.5m [1.4 nr] → Skilled labor [50.86 h]; Unskilled Labor [101.6 h]; Plumber [50.86 h]; Equipment Opreator [10.13 h]; Water Truck [10.13 h]; MH (1200mm Diameter) - ST - depth 1.50 - 2.5m [1.4 nr] |
| 4685 | **RHD4-02-002-A015-(ST)-GRP Pipes - 700 mm diameter** |  | 2026-06-17 → 2026-12-21 (+187d) |  |  |
| RHD4CZ6A015ST1103 | Excavation works for GRP Pipe Line 700 mm - (RD-A-1 /5)-Z6-A015-ST | 2026-06-06 A | 2026-06-07 → 2026-08-05 A (+59d) | 0% → 100% |  |
| RHD4CZ6A015ST1203 | Bedding works for GRP Pipe Line 700 mm - (RD-A-1 /5)-Z6-A015-ST | 2026-06-08 A | 2026-06-09 → 2026-08-08 A (+60d) | 0% → 100% |  |
| RHD4CZ6A015ST1303 | Installing for GRP Pipe Line 700 mm - (RD-A-1 /5)-Z6-A015-ST | 2026-06-11 A | 2026-06-13 → 2026-08-10 A (+58d) | 0% → 100% | resources Unskilled Labor [1.42 h]; Plumber [0.76 h]; GRP (700mm Diameter) - ST - Depth less than 1.5 m [12 m]; GRP (700mm Diameter) - ST - Depth: 1.51m - 2.5m → Unskilled Labor [1.42 h]; Plumber [0.8 h]; GRP (700mm Diameter) - ST - Depth less than 1.5 m [12 m]; GRP (700mm Diameter) - ST - Depth: 1.51m - 2.5m |
| RHD4CZ6A015ST1503 | Backfilling and warning tape works for GRP Pipe Line 700 mm - (RD-A-1 /5)-Z6-A015-ST | 2026-06-16 A | 2026-06-17 → 2026-09-06 A (+81d) | 0% → 100% |  |
| RHD4CZ6A015ST1403 | Primary Test for GRP Pipe Line 700 mm - (RD-A-1 /5)-Z6-A015-ST | 2026-06-14 → 2026-12-20 (+189d) | 2026-06-15 → 2026-12-21 (+189d) |  | resources Unskilled Labor [0.76 h]; Plumber [0.76 h]; Equipment Opreator [0.76 h]; Water Truck [0.76 h]; GRP (700mm Diameter) - ST - Depth less than 1.5 m [5.33 m]; GRP (700mm Diameter) - ST - Depth: 1.51m - 2.5m → Unskilled Labor [0.8 h]; Plumber [0.8 h]; Equipment Opreator [0.8 h]; Water Truck [0.8 h]; GRP (700mm Diameter) - ST - Depth less than 1.5 m [5.33 m]; GRP (700mm Diameter) - ST - Depth: 1.51m - 2.5m |
| 4684 | **RHD4-02-002-A015-(ST)-GRP Pipes - 600 mm diameter** |  | 2026-06-20 → 2026-12-21 (+184d) |  |  |
| RHD4CZ6A015ST1102 | Excavation works for GRP Pipe Line 600 mm - (RD-A-1 /5)-Z6-A015-ST | 2026-06-08 A | 2026-06-09 → 2026-08-05 A (+57d) | 0% → 100% |  |
| RHD4CZ6A015ST1202 | Bedding works for GRP Pipe Line 600 mm - (RD-A-1 /5)-Z6-A015-ST | 2026-06-10 A | 2026-06-11 → 2026-08-08 A (+58d) | 0% → 100% |  |
| RHD4CZ6A015ST1302 | Installing for GRP Pipe Line 600 mm - (RD-A-1 /5)-Z6-A015-ST | 2026-06-14 A | 2026-06-15 → 2026-08-10 A (+56d) | 0% → 100% |  |
| RHD4CZ6A015ST1502 | Backfilling and warning tape works for GRP Pipe Line 600 mm - (RD-A-1 /5)-Z6-A015-ST | 2026-06-18 A | 2026-06-20 → 2026-08-12 A (+53d) | 0% → 100% |  |
| RHD4CZ6A015ST1402 | Primary Test for GRP Pipe Line 600 mm - (RD-A-1 /5)-Z6-A015-ST | 2026-06-16 → 2026-12-20 (+187d) | 2026-06-17 → 2026-12-21 (+187d) |  |  |
| 4683 | **RHD4-02-002-A015-(ST)-GRP Pipes - 500 mm diameter** |  | 2026-06-22 → 2026-12-21 (+182d) |  |  |
| RHD4CZ6A015ST1101 | Excavation works for GRP Pipe Line 500 mm - (RD-A-1 /5)-Z6-A015-ST | 2026-06-10 A | 2026-06-11 → 2026-08-05 A (+55d) | 0% → 100% |  |
| RHD4CZ6A015ST1201 | Bedding works for GRP Pipe Line 500 mm - (RD-A-1 /5)-Z6-A015-ST | 2026-06-13 A | 2026-06-14 → 2026-08-08 A (+55d) | 0% → 100% |  |
| RHD4CZ6A015ST1301 | Installing for GRP Pipe Line 500 mm - (RD-A-1 /5)-Z6-A015-ST | 2026-06-16 A | 2026-06-17 → 2026-08-10 A (+54d) | 0% → 100% |  |
| RHD4CZ6A015ST1501 | Backfilling and warning tape works for GRP Pipe Line 500 mm - (RD-A-1 /5)-Z6-A015-ST | 2026-06-21 A | 2026-06-22 → 2026-08-12 A (+51d) | 0% → 100% |  |
| RHD4CZ6A015ST1401 | Primary Test for GRP Pipe Line 500 mm - (RD-A-1 /5)-Z6-A015-ST | 2026-06-18 → 2026-12-20 (+185d) | 2026-06-20 → 2026-12-21 (+184d) |  |  |
| 4682 | **RHD4-02-002-A015-(ST)-GRP Pipes - 400 mm diameter** | 2026-06-13 → 2026-08-04 (+52d) | 2026-07-02 → 2027-01-09 (+191d) |  |  |
| RHD4CZ6A015ST1100 | Excavation works for GRP Pipe Line 400 mm - (RD-A-1 /5)-Z6-A015-ST | 2026-06-13 → 2026-08-04 A (+52d) | 2026-06-16 → 2026-12-23 (+190d) | 0% → 84% |  |
| RHD4CZ6A015ST1200 | Bedding works for GRP Pipe Line 400 mm - (RD-A-1 /5)-Z6-A015-ST | 2026-06-17 → 2026-08-06 A (+50d) | 2026-06-20 → 2026-12-27 (+190d) | 0% → 86% |  |
| RHD4CZ6A015ST1300 | Installing for GRP Pipe Line 400 mm - (RD-A-1 /5)-Z6-A015-ST | 2026-06-21 → 2026-08-08 A (+48d) | 2026-06-25 → 2027-01-02 (+191d) | 0% → 86% |  |
| RHD4CZ6A015ST1500 | Backfilling and warning tape works for GRP Pipe Line 400 mm - (RD-A-1 /5)-Z6-A015-ST | 2026-06-29 → 2026-08-10 A (+42d) | 2026-07-02 → 2027-01-09 (+191d) | 0% → 71% |  |
| RHD4CZ6A015ST1400 | Primary Test for GRP Pipe Line 400 mm - (RD-A-1 /5)-Z6-A015-ST | 2026-06-27 → 2027-01-03 (+190d) | 2026-06-28 → 2027-01-04 (+190d) |  |  |
| 4696 | **RHD4-02-002-A015-(ST)-UPVC Pipes - 300 mm diameter** |  | 2026-07-09 → 2026-12-23 (+167d) |  |  |
| RHD4CZ6A015ST2100 | Excavation works for UPVC Pipe Line 300 mm - (RD-A-1 /5)-Z6-A015-ST | 2026-06-23 A | 2026-06-25 → 2026-08-06 A (+42d) | 0% → 100% |  |
| RHD4CZ6A015ST2200 | Bedding works for UPVC Pipe Line 300 mm - (RD-A-1 /5)-Z6-A015-ST | 2026-06-27 A | 2026-06-29 → 2026-08-10 A (+42d) | 0% → 100% |  |
| RHD4CZ6A015ST2300 | Installing for UPVC Pipe Line 300 mm - (RD-A-1 /5)-Z6-A015-ST | 2026-06-30 A | 2026-07-02 → 2026-08-13 A (+42d) | 0% → 100% |  |
| RHD4CZ6A015ST2500 | Backfilling and warning tape works for UPVC Pipe Line 300 mm - (RD-A-1 /5)-Z6-A015-ST | 2026-07-06 A | 2026-07-09 → 2026-09-09 A (+62d) | 0% → 100% | resources Skilled labor [35.94 h]; Unskilled Labor [71.99 h]; Equipment Opreator [71.99 h]; Excavator-Poclain [35.94 h]; Dump Truck [35.94 h]; UPVC (300mm Diameter) - ST - Depth less than 1.5 [132.11 m] → Skilled labor [35.94 h]; Unskilled Labor [72 h]; Equipment Opreator [72 h]; Excavator-Poclain [35.94 h]; Dump Truck [35.94 h]; UPVC (300mm Diameter) - ST - Depth less than 1.5 [132.11 m] |
| RHD4CZ6A015ST2400 | Primary Test for UPVC Pipe Line 300 mm - (RD-A-1 /5)-Z6-A015-ST | 2026-07-04 → 2026-12-22 (+171d) | 2026-07-05 → 2026-12-23 (+171d) |  | resources Unskilled Labor [14.38 h]; Plumber [14.38 h]; Equipment Opreator [14.38 h]; Water Truck [14.38 h]; UPVC (300mm Diameter) - ST - Depth less than 1.5 [132.11 m] → Unskilled Labor [14.4 h]; Plumber [14.4 h]; Equipment Opreator [14.4 h]; Water Truck [14.4 h]; UPVC (300mm Diameter) - ST - Depth less than 1.5 [132.11 m] |
| 4704 | **RHD4-02-002-A015-(ST)-Concrete Encasement** | 2026-07-01 → 2026-09-05 (+66d) | 2026-07-02 → 2026-12-23 (+174d) |  |  |
| RHD4CZ6A015ST6100 | Pipe Encasement for Storm Pipelines - (RD-A-1 /5)-Z6-A015-ST | 2026-07-01 → 2026-09-05 A (+66d) | 2026-07-02 → 2026-12-23 (+174d) | 0% → 50% | resources Skilled labor [7.41 h]; Unskilled Labor [7.41 h]; Equipment Opreator [8.17 h]; Concrete Mixer Truck [0.76 h]; Dump Truck [7.41 h]; Pipe Encasement - ST [135.47 m3] → Skilled labor [7.41 h]; Unskilled Labor [7.41 h]; Equipment Opreator [8.17 h]; Concrete Mixer Truck [0.8 h]; Dump Truck [7.41 h]; Pipe Encasement - ST [135.47 m3] |
| 4705 | **RHD4-02-002-Z6-A015-Catch Basin - ST** |  | 2026-11-22 → 2027-05-08 (+167d) |  |  |
| 4706 | **RHD4-02-002-A015-(ST)-Single Catch Basin Works** |  | 2026-11-22 → 2027-05-08 (+167d) |  |  |
| RHD4CZ6A015ST7100 | Excavation works for Single Catch Basin - (RD-A-1 /5)-Z6-A015-ST | 2026-06-11 A | 2026-06-14 → 2026-08-08 A (+55d) | 0% → 100% | resources Skilled labor [31.58 h]; Unskilled Labor [63.16 h]; Equipment Opreator [47.37 h]; Excavator-Poclain [31.58 h]; Dump Truck [15.79 h]; Single Catch basin - ST [7.25 nr] → Skilled labor [31.58 h]; Unskilled Labor [63.2 h]; Equipment Opreator [47.37 h]; Excavator-Poclain [31.58 h]; Dump Truck [15.79 h]; Single Catch basin - ST [7.25 nr] |
| RHD4CZ6A015ST7200 | PC Blinding, Installation and Pipe connection for Single Catch Basin - (RD-A-1 /5)-Z6-A015-ST | 2026-06-15 A | 2026-06-17 → 2026-08-09 A (+53d) | 0% → 100% | resources Skilled labor [31.58 h]; Unskilled Labor [63.16 h]; Plumber [15.79 h]; Equipment Opreator [6.32 h]; Boom Truck [6.32 h]; Single Catch basin - ST [5.8 nr] → Skilled labor [31.58 h]; Unskilled Labor [63.2 h]; Plumber [15.79 h]; Equipment Opreator [6.32 h]; Boom Truck [6.32 h]; Single Catch basin - ST [5.8 nr] |
| RHD4CZ6A015ST7300 | Rings & C.Slab & Final Backfill for Single Catch Basin - (RD-A-1 /5)-Z6-A015-ST | 2026-06-18 A | 2026-06-22 → 2026-09-08 A (+78d) | 0% → 100% |  |
| RHD4CZ6A015ST7400 | Steel Cover for Single Catch Basin - (RD-A-1 /5)-Z6-A015-ST | 2026-11-12 → 2027-04-01 (+140d) | 2026-11-15 → 2027-04-04 (+140d) |  |  |
| RHD4CZ6A015ST7500 | Finishing and Insulation works for Single Catch Basin - (RD-A-1 /5)-Z6-A015-ST | 2026-11-16 → 2027-05-02 (+167d) | 2026-11-22 → 2027-05-08 (+167d) |  | resources Skilled labor [63.16 h]; Unskilled Labor [126.33 h]; Equipment Opreator [12.63 h]; Boom Truck [12.63 h]; Single Catch basin - ST [4.35 nr] → Skilled labor [63.2 h]; Unskilled Labor [126.33 h]; Equipment Opreator [12.63 h]; Boom Truck [12.63 h]; Single Catch basin - ST [4.35 nr] |
| 4299 | **RHD4-02-002-Z6-A015-Concrete Box Culvert - ST** | 2026-07-04 → 2026-06-11 (-23d) | 2026-08-19 → 2027-01-18 (+152d) |  |  |
| 4300 | **RHD4-02-002-A015-(ST)-Concrete Box Culvert** | 2026-07-04 → 2026-06-11 (-23d) | 2026-08-19 → 2026-09-22 (+34d) |  |  |
| RHD4CZ6A015ST4100 | Excavation works for Box Culvert - (RD-A-1/5)-Z6-A015-ST(Completed) | 2026-07-04 → 2026-06-11 A (-23d) | 2026-07-11 → 2026-08-03 A (+23d) | 0% → 100% |  |
| RHD4CZ6A015ST4200 | PC works for Box Culvert - (RD-A-1/5)-Z6-A015-ST(Completed) | 2026-07-12 → 2026-06-15 A (-27d) | 2026-07-19 → 2026-08-03 A (+15d) | 0% → 100% |  |
| RHD4CZ6A015ST4400 | Raft works for Box Culvert - (RD-A-1/5)-Z6-A015-ST(Completed) | 2026-07-12 → 2026-07-11 A (-1d) | 2026-07-28 → 2026-08-03 A (+6d) | 0% → 100% | resources Carpenter [18.19 h]; Skilled labor [22.22 h]; Steel Fixer [4.03 h]; Equipment Opreator [37.24 h]; Boom Truck [0.76 h]; Concrete Mixer Truck [18.19 h]; Concrete Pump [18.19 h]; Supply and cast in place reinforced concrete for Box culverts - ST [360.38 m3]; Supply, placing, and fixing of high tensile reinforcement steel for Box culverts - ST [79.7 Ton] → Carpenter [18.19 h]; Skilled labor [22.22 h]; Steel Fixer [4 h]; Equipment Opreator [37.24 h]; Boom Truck [0.8 h]; Concrete Mixer Truck [18.19 h]; Concrete Pump [18.19 h]; Supply and cast in place reinforced concrete for Box culverts - ST [360.38 m3]; Supply, placing, and fixing of high tensile reinforcement steel for Box culverts - ST [79.7 Ton] |
| RHD4CZ6A015ST4500 | Wall and slab works for Box Culvert - (RD-A-1/5)-Z6-A015-ST | 2026-07-29 → 2026-08-04 A (+6d) | 2026-08-04 → 2026-09-21 A (+48d) | 0% → 100% |  |
| RHD4CZ6A015ST4700 | Backfilling works for Box Culvert - (RD-A-1/5)-Z6-A015-ST | 2026-08-12 A | 2026-08-13 → 2026-09-22 A (+40d) | 0% → 100% |  |
| RHD4CZ6A015ST4600 | Insulation and Testing for Box Culvert - (RD-A-1/5)-Z6-A015-ST | 2026-08-15 A | 2026-08-19 → 2026-09-21 A (+33d) | 0% → 100% |  |
| 4301 | **RHD4-02-002-A015-(ST)-Concrete Chambers** | 2026-08-05 → 2026-08-20 (+15d) | 2026-08-13 → 2027-01-18 (+158d) |  |  |
| RHD4CZ6A015ST5100 | Excavation and Bedding for Concrete Chambers - for Box Culvert - (RD-A-1/5)-Z6-A015-ST | 2026-08-05 → 2026-08-20 A (+15d) | 2026-08-06 → 2027-01-11 (+158d) | 0% → 50% |  |
| RHD4CZ6A015ST5200 | PC works for Concrete Chambers - for Box Culvert - (RD-A-1/5)-Z6-A015-ST | 2026-08-08 → 2026-08-25 A (+17d) | 2026-08-09 → 2027-01-13 (+157d) | 0% → 50% |  |
| RHD4CZ6A015ST5300 | Installation for Concrete Chambers - for Box Culvert - (RD-A-1/5)-Z6-A015-ST | 2026-08-10 → 2026-08-30 A (+20d) | 2026-08-11 → 2027-01-16 (+158d) | 0% → 50% |  |
| RHD4CZ6A015ST5400 | Backfilling works for Concrete Chambers - for Box Culvert - (RD-A-1/5)-Z6-A015-ST | 2026-08-12 → 2027-01-17 (+158d) | 2026-08-13 → 2027-01-18 (+158d) |  |  |
| 4767 | **RHD4-02-002-Z6-A015-Potable Network - PT** | 2026-07-11 → 2026-12-24 (+166d) | 2026-11-01 → 2027-03-21 (+140d) |  |  |
| 1745 | **RHD4-02-002-C011-(PT)-HDPE Pipes - 450 mm diameter** | 2026-07-11 → 2026-12-24 (+166d) | 2026-07-30 → 2027-01-13 (+167d) |  |  |
| RHD4CZ6A015PT1104 | Excavation works for HDPE Pipline 450 mm - (RD-A-1 /5)-Z6-A015-PT | 2026-07-11 → 2026-12-24 (+166d) | 2026-07-14 → 2026-12-28 (+167d) |  | resources Skilled labor [33.43 h]; Unskilled Labor [33.43 h]; Equipment Opreator [40.19 h]; Excavator-Poclain [33.43 h]; Dump Truck [6.64 h]; HDPE (450mm Diameter) - PT - Depth: less than 1.5m [45 m]; HDPE (450mm Diameter) - PT - Depth: more than 1.5m → Skilled labor [33.44 h]; Unskilled Labor [33.44 h]; Equipment Opreator [40.16 h]; Excavator-Poclain [33.44 h]; Dump Truck [6.64 h]; HDPE (450mm Diameter) - PT - Depth: less than 1.5m [45 m]; HDPE (450mm Diameter) - PT - Depth: more than 1.5m |
| RHD4CZ6A015PT1204 | Bedding works for HDPE Pipline 450 mm - (RD-A-1 /5)-Z6-A015-PT | 2026-07-15 → 2026-12-29 (+167d) | 2026-07-18 → 2026-12-31 (+166d) |  | resources Skilled labor [28.75 h]; Unskilled Labor [57.5 h]; Equipment Opreator [57.5 h]; Excavator-Poclain [28.75 h]; Dump Truck [28.75 h]; HDPE (450mm Diameter) - PT - Depth: less than 1.5m [22.5 m]; HDPE (450mm Diameter) - PT - Depth: more than 1.5m → Skilled labor [28.72 h]; Unskilled Labor [57.52 h]; Equipment Opreator [57.52 h]; Excavator-Poclain [28.72 h]; Dump Truck [28.72 h]; HDPE (450mm Diameter) - PT - Depth: less than 1.5m [22.5 m]; HDPE (450mm Diameter) - PT - Depth: more than 1.5m |
| RHD4CZ6A015PT1304 | Installing for HDPE Pipline 450 mm - (RD-A-1 /5)-Z6-A015-PT | 2026-07-19 → 2027-01-02 (+167d) | 2026-07-23 → 2027-01-07 (+168d) |  | resources Unskilled Labor [104.66 h]; Plumber [52.38 h]; Equipment Opreator [52.38 h]; Boom Truck [52.38 h]; HDPE (450mm Diameter) - PT - Depth: less than 1.5m [202.5 m]; HDPE (450mm Diameter) - PT - Depth: more than 1.5m → Unskilled Labor [104.64 h]; Plumber [52.4 h]; Equipment Opreator [52.4 h]; Boom Truck [52.4 h]; HDPE (450mm Diameter) - PT - Depth: less than 1.5m [202.5 m]; HDPE (450mm Diameter) - PT - Depth: more than 1.5m |
| RHD4CZ6A015PT1404 | Primary Test for HDPE Pipline 450 mm - (RD-A-1 /5)-Z6-A015-PT | 2026-07-25 → 2027-01-07 (+166d) | 2026-07-26 → 2027-01-09 (+167d) |  |  |
| RHD4CZ6A015PT1504 | Backfilling and warning tape works for HDPE Pipline 450 mm - (RD-A-1 /5)-Z6-A015-PT | 2026-07-27 → 2027-01-10 (+167d) | 2026-07-30 → 2027-01-13 (+167d) |  | resources Skilled labor [40.51 h]; Unskilled Labor [81.13 h]; Equipment Opreator [81.13 h]; Excavator-Poclain [40.51 h]; Dump Truck [40.51 h]; HDPE (450mm Diameter) - PT - Depth: less than 1.5m [90 m]; HDPE (450mm Diameter) - PT - Depth: more than 1.5m → Skilled labor [40.48 h]; Unskilled Labor [81.12 h]; Equipment Opreator [81.12 h]; Excavator-Poclain [40.48 h]; Dump Truck [40.48 h]; HDPE (450mm Diameter) - PT - Depth: less than 1.5m [90 m]; HDPE (450mm Diameter) - PT - Depth: more than 1.5m |
| 4770 | **RHD4-02-002-A015-(PT)-HDPE Pipes - 200 mm diameter** | 2026-10-05 → 2027-02-17 (+135d) | 2026-10-20 → 2027-03-06 (+137d) |  |  |

| ID | Task | Start | Finish | Duration | Complete | Other |
| --- | --- | --- | --- | --- | --- | --- |
| RHD4CZ6A015PT1102 | Excavation works for HDPE Pipline 200 mm - (RD-A-1 /5)-Z6-A015-PT | 2026-10-05 → 2027-02-17 (+135d) | 2026-10-07 → 2027-02-20 (+136d) |  |  |  |
| RHD4CZ6A015PT1202 | Bedding works for HDPE Pipline 200 mm - (RD-A-1 /5)-Z6-A015-PT | 2026-10-08 → 2027-02-21 (+136d) | 2026-10-10 → 2027-02-23 (+136d) |  |  | resources Skilled labor [21.56 h]; Unskilled Labor [43.13 h]; Equipment Opreator [43.13 h]; Excavator-Poclain [21.56 h]; Dump Truck [21.56 h]; HDPE (200mm Diameter) - PT - Depth: less than 1.5m [25.28 m]; HDPE (200mm Diameter) - PT - Depth: more than 1.5m → Skilled labor [21.6 h]; Unskilled Labor [43.13 h]; Equipment Opreator [43.13 h]; Excavator-Poclain [21.6 h]; Dump Truck [21.6 h]; HDPE (200mm Diameter) - PT - Depth: less than 1.5m [25.28 m]; HDPE (200mm Diameter) - PT - Depth: more than 1.5m |
| RHD4CZ6A015PT1302 | Installing for HDPE Pipline 200 mm - (RD-A-1 /5)-Z6-A015-PT | 2026-10-11 → 2027-02-24 (+136d) | 2026-10-14 → 2027-02-28 (+137d) |  |  |  |
| RHD4CZ6A015PT1402 | Primary Test for HDPE Pipline 200 mm - (RD-A-1 /5)-Z6-A015-PT | 2026-10-15 → 2027-03-01 (+137d) | 2026-10-17 → 2027-03-02 (+136d) |  |  |  |
| RHD4CZ6A015PT1502 | Backfilling and warning tape works for HDPE Pipline 200 mm - (RD-A-1 /5)-Z6-A015-PT | 2026-10-18 → 2027-03-03 (+136d) | 2026-10-20 → 2027-03-06 (+137d) |  |  |  |
| 4776 | **RHD4-02-002-A015-(PT)-Wash out Valve Chambers** | 2026-10-21 → 2027-03-07 (+137d) | 2026-10-29 → 2027-03-18 (+140d) |  |  |  |
| RHD4CZ6A015PT2101 | Excavation and Bedding for Wash out Valve Chambers for Potable Water Network - (RD-A-1 /5)-Z6-A015-PT | 2026-10-21 → 2027-03-07 (+137d) | 2026-10-22 → 2027-03-08 (+137d) |  |  |  |
| RHD4CZ6A015PT2201 | PC works for Wash out Valve Chambers for Potable Water Network - (RD-A-1 /5)-Z6-A015-PT | 2026-10-24 → 2027-03-13 (+140d) | 2026-10-25 → 2027-03-14 (+140d) |  |  |  |
| RHD4CZ6A015PT2301 | Installation for Wash out Valve Chambers for Potable Water Network - (RD-A-1 /5)-Z6-A015-PT | 2026-10-26 → 2027-03-15 (+140d) | 2026-10-27 → 2027-03-16 (+140d) |  |  |  |
| RHD4CZ6A015PT2401 | Backfilling works for Wash out Valve Chambers for Potable Water Network - (RD-A-1 /5)-Z6-A015-PT | 2026-10-28 → 2027-03-17 (+140d) | 2026-10-29 → 2027-03-18 (+140d) |  |  |  |
| 4777 | **RHD4-02-002-A015-(PT)-Wash out Valves** | 2026-10-28 → 2027-03-17 (+140d) | 2026-11-01 → 2027-03-21 (+140d) |  |  |  |
| RHD4CZ6A015PT3102 | Installation for Wash out Valves for Potable Water Network - (RD-A-1 /5)-Z6-A015-PT | 2026-10-28 → 2027-03-17 (+140d) | 2026-10-29 → 2027-03-18 (+140d) |  |  |  |
| RHD4CZ6A015PT3202 | Stem and Service box for Wash out Valves for Potable Water Network - (RD-A-1 /5)-Z6-A015-PT | 2026-10-31 → 2027-03-20 (+140d) | 2026-11-01 → 2027-03-21 (+140d) |  |  |  |
| 4780 | **RHD4-02-002-A015-(PT)-Fire Hydrant** | 2026-10-21 → 2027-03-07 (+137d) | 2026-11-01 → 2027-03-21 (+140d) |  |  |  |
| RHD4CZ6A015PT4100 | Excavation and Bedding and Pipe Installation for Fire Hydrant - (RD-A-1 /5)-Z6-A015-PT | 2026-10-21 → 2027-03-07 (+137d) | 2026-10-22 → 2027-03-08 (+137d) |  |  |  |
| RHD4CZ6A015PT4200 | Valve Installation for Fire Hydrant - (RD-A-1 /5)-Z6-A015-PT | 2026-10-24 → 2027-03-13 (+140d) | 2026-10-25 → 2027-03-14 (+140d) |  |  |  |
| RHD4CZ6A015PT4300 | Stem for Fire Hydrant - (RD-A-1 /5)-Z6-A015-PT | 2026-10-26 → 2027-03-15 (+140d) | 2026-10-27 → 2027-03-16 (+140d) |  |  |  |
| RHD4CZ6A015PT4400 | Fire Installation for Fire Hydrant - (RD-A-1 /5)-Z6-A015-PT | 2026-10-28 → 2027-03-17 (+140d) | 2026-10-29 → 2027-03-18 (+140d) |  |  |  |
| RHD4CZ6A015PT4500 | Protection Barriers for Fire Hydrant - (RD-A-1 /5)-Z6-A015-PT | 2026-10-31 → 2027-03-20 (+140d) | 2026-11-01 → 2027-03-21 (+140d) |  |  |  |
| 4781 | **RHD4-02-002-A015-(PT)-Concrete Encasement** | 2026-10-15 → 2027-03-01 (+137d) | 2026-10-17 → 2027-03-03 (+137d) |  |  |  |
| RHD4CZ6A015PT5100 | Pipe Encasement for Potable Pipelines - (RD-A-1 /5)-Z6-A015-PT | 2026-10-15 → 2027-03-01 (+137d) | 2026-10-17 → 2027-03-03 (+137d) | 2d → 2.02d |  | resources Skilled labor [4.68 h]; Unskilled Labor [4.68 h]; Equipment Opreator [5.23 h]; Concrete Mixer Truck [0.44 h]; Dump Truck [4.68 h]; Pipe Encasement - PT [96.45 m3] → Skilled labor [4.72 h]; Unskilled Labor [4.72 h]; Equipment Opreator [5.2 h]; Concrete Mixer Truck [0.4 h]; Dump Truck [4.72 h]; Pipe Encasement - PT [96.45 m3] |
| 4773 | **RHD4-02-002-A015-(PT)-Gate Valves (Direct Buried)** | 2026-10-13 → 2027-02-27 (+137d) | 2026-10-22 → 2027-03-08 (+137d) |  |  |  |
| RHD4CZ6A015PT3100 | Installation for Direct Buried Gate Valves - (RD-A-1 /5)-Z6-A015-PT | 2026-10-13 → 2027-02-27 (+137d) | 2026-10-14 → 2027-02-28 (+137d) |  |  |  |
| RHD4CZ6A015PT3200 | Stem and Service box for Direct Buried Gate Valves - (RD-A-1 /5)-Z6-A015-PT | 2026-10-21 → 2027-03-07 (+137d) | 2026-10-22 → 2027-03-08 (+137d) |  |  |  |
| 4782 | **RHD4-02-002-Z6-A015-Irrigation Network - IRR** | 2026-10-08 → 2026-08-04 (-65d) | 2026-11-18 → 2027-04-07 (+140d) |  |  |  |
| 4783 | **RHD4-02-002-A015-(IRR)-HDPE Pipes - 160 mm diameter** | 2026-10-08 → 2026-08-04 (-65d) | 2026-11-07 → 2027-03-27 (+140d) |  |  |  |
| RHD4CZ6A015IRR1100 | Excavation works for HDPE Pipline 160 mm - (RD-A-1 /5)-Z6-A015-IRR | 2026-10-08 → 2026-08-04 A (-65d) | 2026-10-15 → 2027-03-01 (+137d) |  | 0% → 14% |  |
| RHD4CZ6A015IRR1200 | Bedding works for HDPE Pipline 160 mm - (RD-A-1 /5)-Z6-A015-IRR | 2026-10-17 → 2026-08-06 A (-72d) | 2026-10-21 → 2027-03-07 (+137d) |  | 0% → 13% |  |
| RHD4CZ6A015IRR1300 | Installing for HDPE Pipline 160 mm - (RD-A-1 /5)-Z6-A015-IRR | 2026-10-22 → 2026-08-08 A (-75d) | 2026-10-29 → 2027-03-18 (+140d) |  | 0% → 13% |  |
| RHD4CZ6A015IRR1400 | Primary Test for HDPE Pipline 160 mm - (RD-A-1 /5)-Z6-A015-IRR | 2026-10-31 → 2027-03-20 (+140d) | 2026-11-01 → 2027-03-21 (+140d) |  |  |  |
| RHD4CZ6A015IRR1500 | Backfilling and warning tape works for HDPE Pipline 160 mm - (RD-A-1 /5)-Z6-A015-IRR | 2026-11-02 → 2027-03-22 (+140d) | 2026-11-07 → 2027-03-27 (+140d) |  |  |  |
| 4791 | **RHD4-02-002-A015-(IRR)-Gate Valves (Direct Buried)** | 2026-10-27 → 2027-03-16 (+140d) | 2026-11-10 → 2027-03-30 (+140d) |  |  |  |
| RHD4CZ6A015IRR3100 | Installation for Direct Buried Gate Valves - (RD-A-1 /5)-Z6-A015-IRR | 2026-10-27 → 2027-03-16 (+140d) | 2026-10-29 → 2027-03-18 (+140d) |  |  | resources Unskilled Labor [27.23 h]; Plumber [27.23 h]; Gate valves dia 100 mm - TSE [4.5 nr] → Unskilled Labor [27.2 h]; Plumber [27.2 h]; Gate valves dia 100 mm - TSE [4.5 nr] |
| RHD4CZ6A015IRR3200 | Stem and Service box for Direct Buried Gate Valves - (RD-A-1 /5)-Z6-A015-IRR | 2026-11-08 → 2027-03-28 (+140d) | 2026-11-10 → 2027-03-30 (+140d) |  |  | resources Unskilled Labor [27.23 h]; Plumber [27.23 h]; Gate valves dia 100 mm - TSE [0.5 nr] → Unskilled Labor [27.2 h]; Plumber [27.2 h]; Gate valves dia 100 mm - TSE [0.5 nr] |
| 4794 | **RHD4-02-002-A015-(IRR)-Wash out Chamber** | 2026-11-08 → 2027-03-28 (+140d) | 2026-11-16 → 2027-04-05 (+140d) |  |  |  |
| RHD4CZ6A015IRR2101 | Excavation and Bedding for Wash out Chamber for Irrigation Network - (RD-A-1 /5)-Z6-A015-IRR | 2026-11-08 → 2027-03-28 (+140d) | 2026-11-09 → 2027-03-29 (+140d) |  |  |  |
| RHD4CZ6A015IRR2201 | PC works for Wash out Chamber for Irrigation Network - (RD-A-1 /5)-Z6-A015-IRR | 2026-11-10 → 2027-03-30 (+140d) | 2026-11-11 → 2027-03-31 (+140d) |  |  |  |
| RHD4CZ6A015IRR2301 | Installation for Wash out Chamber for Irrigation Network - (RD-A-1 /5)-Z6-A015-IRR | 2026-11-12 → 2027-04-01 (+140d) | 2026-11-14 → 2027-04-03 (+140d) |  |  |  |
| RHD4CZ6A015IRR2401 | Backfilling works for Wash out Chamber for Irrigation Network - (RD-A-1 /5)-Z6-A015-IRR | 2026-11-15 → 2027-04-04 (+140d) | 2026-11-16 → 2027-04-05 (+140d) |  |  |  |
| 4795 | **RHD4-02-002-A015-(IRR)-Wash out Valves** | 2026-11-15 → 2027-04-04 (+140d) | 2026-11-18 → 2027-04-07 (+140d) |  |  |  |
| RHD4CZ6A015IRR3102 | Installation for Wash out Valve for Irrigation Network - (RD-A-1 /5)-Z6-A015-IRR | 2026-11-15 → 2027-04-04 (+140d) | 2026-11-16 → 2027-04-05 (+140d) |  |  |  |
| RHD4CZ6A015IRR3202 | Stem and Service box for Wash out Valve for Irrigation Network - (RD-A-1 /5)-Z6-A015-IRR | 2026-11-17 → 2027-04-06 (+140d) | 2026-11-18 → 2027-04-07 (+140d) |  |  |  |
| 4796 | **RHD4-02-002-A015-(IRR)-Air Valve Chamber** | 2026-11-08 → 2027-03-28 (+140d) | 2026-11-16 → 2027-04-05 (+140d) |  |  |  |
| RHD4CZ6A015IRR2102 | Excavation and Bedding for Valve Chamber for Irrigation Network - (RD-A-1 /5)-Z6-A015-IRR | 2026-11-08 → 2027-03-28 (+140d) | 2026-11-09 → 2027-03-29 (+140d) |  |  |  |
| RHD4CZ6A015IRR2202 | PC works for Valve Chamber for Irrigation Network - (RD-A-1 /5)-Z6-A015-IRR | 2026-11-10 → 2027-03-30 (+140d) | 2026-11-11 → 2027-03-31 (+140d) |  |  |  |
| RHD4CZ6A015IRR2302 | Installation for Valve Chamber for Irrigation Network - (RD-A-1 /5)-Z6-A015-IRR | 2026-11-12 → 2027-04-01 (+140d) | 2026-11-14 → 2027-04-03 (+140d) |  |  |  |
| RHD4CZ6A015IRR2402 | Backfilling works for Valve Chamber for Irrigation Network - (RD-A-1 /5)-Z6-A015-IRR | 2026-11-15 → 2027-04-04 (+140d) | 2026-11-16 → 2027-04-05 (+140d) |  |  |  |
| 4797 | **RHD4-02-002-A015-(IRR)-Air Valves** | 2026-11-15 → 2027-04-04 (+140d) | 2026-11-18 → 2027-04-07 (+140d) |  |  |  |
| RHD4CZ6A015IRR3103 | Installation for Air Valves for Irrigation Network - (RD-A-1 /5)-Z6-A015-IRR | 2026-11-15 → 2027-04-04 (+140d) | 2026-11-16 → 2027-04-05 (+140d) |  |  |  |
| RHD4CZ6A015IRR3203 | Stem and Service box for Air Valves for Irrigation Network - (RD-A-1 /5)-Z6-A015-IRR | 2026-11-17 → 2027-04-06 (+140d) | 2026-11-18 → 2027-04-07 (+140d) |  |  |  |
| 4823 | **RHD4-02-002-Z6-A015-Low Voltage Network - LV** | 2027-02-20 → 2027-09-08 (+200d) | 2027-03-14 → 2027-09-30 (+200d) |  |  |  |
| 4826 | **RHD4-02-002-A015-(LV)-Low Voltage cables** | 2027-02-20 → 2027-09-08 (+200d) | 2027-03-14 → 2027-09-30 (+200d) |  |  |  |
| RHD4CZ6A015LV3100 | Excavation for Low Voltage Cables for Low Voltage Network - (RD-A-1 /5)-Z6-A015-LV | 2027-02-20 → 2027-09-08 (+200d) | 2027-02-23 → 2027-09-14 (+203d) | 3d → 6d |  |  |
| RHD4CZ6A015LV3200 | Cable Laying of Low Voltage Cables for Low Voltage Network - (RD-A-1 /5)-Z6-A015-LV | 2027-02-24 → 2027-09-15 (+203d) | 2027-03-01 → 2027-09-20 (+203d) |  |  | resources Skilled labor [52.82 h]; Unskilled Labor [211.38 h]; Electrician [105.64 h]; Equipment Opreator [158.45 h]; Boom Truck [52.82 h]; Cable Laying Machine [105.64 h]; Cable, Copper 4x50mm2/ CU/XLPE/PVC +1x25mm2 CU/PVC [433.2 m]; Cable, Copper 3x10mm2/ CU/XLPE/SWA/PVC [440.06 m] → Skilled labor [52.8 h]; Unskilled Labor [211.38 h]; Electrician [105.6 h]; Equipment Opreator [158.45 h]; Boom Truck [52.8 h]; Cable Laying Machine [105.6 h]; Cable, Copper 4x50mm2/ CU/XLPE/PVC +1x25mm2 CU/PVC [433.2 m]; Cable, Copper 3x10mm2/ CU/XLPE/SWA/PVC [440.06 m] |
| RHD4CZ6A015LV3300 | Warning tape and Backfill for Low Voltage Cables for Low Voltage Network - (RD-A-1 /5)-Z6-A015-LV | 2027-03-02 → 2027-09-21 (+203d) | 2027-03-07 → 2027-09-27 (+204d) |  |  | resources Skilled labor [52.82 h]; Unskilled Labor [211.38 h]; Electrician [105.64 h]; Equipment Opreator [52.82 h]; Boom Truck [52.82 h]; Cable, Copper 4x50mm2/ CU/XLPE/PVC +1x25mm2 CU/PVC [108.3 m]; Cable, Copper 3x10mm2/ CU/XLPE/SWA/PVC [110.01 m] → Skilled labor [52.8 h]; Unskilled Labor [211.38 h]; Electrician [105.6 h]; Equipment Opreator [52.8 h]; Boom Truck [52.8 h]; Cable, Copper 4x50mm2/ CU/XLPE/PVC +1x25mm2 CU/PVC [108.3 m]; Cable, Copper 3x10mm2/ CU/XLPE/SWA/PVC [110.01 m] |
| RHD4CZ6A015LV3400 | Testing of Low Voltage Cables for Low Voltage Network - (RD-A-1 /5)-Z6-A015-LV | 2027-03-08 → 2027-09-28 (+204d) | 2027-03-14 → 2027-09-30 (+200d) |  |  |  |
| 4829 | **RHD4-02-002-Z6-A015-Street Lighting Network - SL** | 2027-03-15 → 2027-10-02 (+201d) | 2027-04-11 → 2027-10-28 (+200d) |  |  |  |
| 4832 | **RHD4-02-002-A015-(SL)-Street Lighting cables** | 2027-03-15 → 2027-10-02 (+201d) | 2027-03-27 → 2027-10-13 (+200d) |  |  |  |
| RHD4CZ6A015SL3100 | Excavation for Street Lighting Cables for Street Lighting Network - (RD-A-1 /5)-Z6-A015-SL | 2027-03-15 → 2027-10-02 (+201d) | 2027-03-17 → 2027-10-04 (+201d) |  |  | resources Skilled labor [30.38 h]; Unskilled Labor [60.77 h]; Equipment Opreator [60.77 h]; Excavator-Poclain [30.38 h]; Boom Truck [30.38 h]; Cable, Copper 4x16mm2/ CU/XLPE/SWA/PVC + 1x16mm2 CU/PVC [109.99 m]; Cable, Copper 4x10mm2/ CU/XLPE/SWA/PVC + 1x10mm2 CU/PVC [29.63 m] → Skilled labor [30.4 h]; Unskilled Labor [60.8 h]; Equipment Opreator [60.8 h]; Excavator-Poclain [30.4 h]; Boom Truck [30.4 h]; Cable, Copper 4x16mm2/ CU/XLPE/SWA/PVC + 1x16mm2 CU/PVC [109.99 m]; Cable, Copper 4x10mm2/ CU/XLPE/SWA/PVC + 1x10mm2 CU/PVC [29.63 m] |
| RHD4CZ6A015SL3200 | Cable Laying of Street Lighting Cables for Street Lighting Network - (RD-A-1 /5)-Z6-A015-SL | 2027-03-18 → 2027-10-05 (+201d) | 2027-03-21 → 2027-10-07 (+200d) |  |  | resources Skilled labor [25.37 h]; Unskilled Labor [101.39 h]; Electrician [50.64 h]; Equipment Opreator [76.01 h]; Boom Truck [25.37 h]; Cable Laying Machine [50.64 h]; Cable, Copper 4x16mm2/ CU/XLPE/SWA/PVC + 1x16mm2 CU/PVC [329.97 m]; Cable, Copper 4x10mm2/ CU/XLPE/SWA/PVC + 1x10mm2 CU/PVC [88.89 m] → Skilled labor [25.37 h]; Unskilled Labor [101.39 h]; Electrician [50.64 h]; Equipment Opreator [76 h]; Boom Truck [25.37 h]; Cable Laying Machine [50.64 h]; Cable, Copper 4x16mm2/ CU/XLPE/SWA/PVC + 1x16mm2 CU/PVC [329.97 m]; Cable, Copper 4x10mm2/ CU/XLPE/SWA/PVC + 1x10mm2 CU/PVC [88.89 m] |
| RHD4CZ6A015SL3300 | Warning tape and Backfill for Street Lighting Cables for Street Lighting Network - (RD-A-1 /5)-Z6-A015-SL | 2027-03-22 → 2027-10-09 (+201d) | 2027-03-24 → 2027-10-11 (+201d) |  |  |  |
| RHD4CZ6A015SL3400 | Testing of Street Lighting Cables for Street Lighting Network - (RD-A-1 /5)-Z6-A015-SL | 2027-03-25 → 2027-10-12 (+201d) | 2027-03-27 → 2027-10-13 (+200d) |  |  | resources Skilled labor [15.25 h]; Unskilled Labor [60.77 h]; Electrician [30.38 h]; Equipment Opreator [15.25 h]; Boom Truck [15.25 h]; Cable, Copper 4x16mm2/ CU/XLPE/SWA/PVC + 1x16mm2 CU/PVC [27.5 m]; Cable, Copper 4x10mm2/ CU/XLPE/SWA/PVC + 1x10mm2 CU/PVC [7.41 m] → Skilled labor [15.25 h]; Unskilled Labor [60.8 h]; Electrician [30.4 h]; Equipment Opreator [15.25 h]; Boom Truck [15.25 h]; Cable, Copper 4x16mm2/ CU/XLPE/SWA/PVC + 1x16mm2 CU/PVC [27.5 m]; Cable, Copper 4x10mm2/ CU/XLPE/SWA/PVC + 1x10mm2 CU/PVC [7.41 m] |
| 4833 | **RHD4-02-002-A015-(SL)-Street Lighting Poles** | 2027-03-28 → 2027-10-14 (+200d) | 2027-04-11 → 2027-10-28 (+200d) |  |  |  |
| RHD4CZ6A015SL1100 | Excavation for RC Base for Lighting Poles for Street Lighting Network - (RD-A-1 /5)-Z6-A015-SL | 2027-03-28 → 2027-10-14 (+200d) | 2027-03-29 → 2027-10-16 (+201d) |  |  |  |
| RHD4CZ6A015SL1200 | Installation for RC Base for Lighting Poles for Street Lighting Network - (RD-A-1 /5)-Z6-A015-SL | 2027-03-30 → 2027-10-17 (+201d) | 2027-03-31 → 2027-10-18 (+201d) |  |  |  |
| RHD4CZ6A015SL1300 | Backfill for RC Base for Lighting Poles for Street Lighting Network - (RD-A-1 /5)-Z6-A015-SL | 2027-04-01 → 2027-10-19 (+201d) | 2027-04-03 → 2027-10-20 (+200d) |  |  |  |
| RHD4CZ6A015SL1400 | Installation for Lighting Poles for Street Lighting Network - (RD-A-1 /5)-Z6-A015-SL | 2027-04-04 → 2027-10-21 (+200d) | 2027-04-05 → 2027-10-23 (+201d) |  |  |  |
| RHD4CZ6A015SL1500 | Luminaire Installation for Lighting Poles for Street Lighting Network - (RD-A-1 /5)-Z6-A015-SL | 2027-04-08 → 2027-10-26 (+201d) | 2027-04-11 → 2027-10-28 (+200d) |  |  | resources Unskilled Labor [55.21 h]; Electrician [27.55 h]; Equipment Opreator [11 h]; Boom Truck [11 h]; Street Lighting( LED) Luminaire of Output ?39018 lumen [38 Unit] → Unskilled Labor [55.2 h]; Electrician [27.55 h]; Equipment Opreator [11 h]; Boom Truck [11 h]; Street Lighting( LED) Luminaire of Output ?39018 lumen [38 Unit] |
| 4835 | **RHD4-02-002-A015-(SL)-Street Lighting Earthing System** | 2027-04-06 → 2027-10-24 (+201d) | 2027-04-07 → 2027-10-25 (+201d) |  |  |  |
| RHD4CZ6A015SL6100 | Installation of Earthing for Lighting Poles and Fedder Pillers for Street Lighting Network - (RD-A-1 /5)-Z6-A015-SL | 2027-04-06 → 2027-10-24 (+201d) | 2027-04-07 → 2027-10-25 (+201d) |  |  |  |

| ID | Task | Start | Finish | Duration | Complete | Other |
| --- | --- | --- | --- | --- | --- | --- |
| 4841 | **RHD4-02-002-Z6-A015-Telecommunications Network - TC** | 2026-05-30 → 2026-12-20 (+204d) | 2027-05-05 → 2027-11-22 (+201d) |  |  |  |
| 4842 | **RHD4-02-002-A015-(TC)-Telecommunications Ducts** | 2027-04-12 → 2027-10-30 (+201d) | 2027-05-05 → 2027-11-22 (+201d) |  |  |  |
| RHD4CZ6A015TC2100 | Excavation of HDPE Ducts for Telecom Network - (RD-A-1 /5)-Z6-A015-TC | 2027-04-12 → 2027-10-30 (+201d) | 2027-04-18 → 2027-11-04 (+200d) |  |  |  |
| RHD4CZ6A015TC2200 | Installation of HDPE Ducts for Telecom Network - (RD-A-1 /5)-Z6-A015-TC | 2027-04-19 → 2027-11-06 (+201d) | 2027-04-28 → 2027-11-15 (+201d) |  |  |  |
| RHD4CZ6A015TC2400 | Backfilling of HDPE Ducts for Telecom Network - (RD-A-1 /5)-Z6-A015-TC | 2027-04-29 → 2027-11-16 (+201d) | 2027-05-05 → 2027-11-22 (+201d) |  |  |  |
| 4843 | **RHD4-02-002-A015-(TC)-Telecommunications Manholes** | 2027-04-19 → 2027-11-06 (+201d) | 2027-04-25 → 2027-11-11 (+200d) |  |  |  |
| RHD4CZ6A015TC5100 | Excavation for Manholes for Telecom Network - (RD-A-1 /5)-Z6-A015-TC | 2027-04-19 → 2027-11-06 (+201d) | 2027-04-21 → 2027-11-08 (+201d) |  |  | resources Skilled labor [9.58 h]; Unskilled Labor [9.58 h]; Equipment Opreator [7.62 h]; Excavator-Poclain [3.81 h]; Dump Truck [3.81 h]; Manhole Type 1 - TC [0.45 nr]; Manhole Type 2 - TC [0.3 nr] → Skilled labor [9.6 h]; Unskilled Labor [9.6 h]; Equipment Opreator [7.62 h]; Excavator-Poclain [3.81 h]; Dump Truck [3.81 h]; Manhole Type 1 - TC [0.45 nr]; Manhole Type 2 - TC [0.3 nr] |
| RHD4CZ6A015TC5200 | Installation of Manholes for Telecom Network - (RD-A-1 /5)-Z6-A015-TC | 2027-04-22 → 2027-11-09 (+201d) | 2027-04-25 → 2027-11-11 (+200d) |  |  | resources Skilled labor [9.58 h]; Unskilled Labor [9.58 h]; Equipment Opreator [3.81 h]; Boom Truck [3.81 h]; Manhole Type 1 - TC [2.55 nr]; Manhole Type 2 - TC [1.7 nr] → Skilled labor [9.6 h]; Unskilled Labor [9.6 h]; Equipment Opreator [3.81 h]; Boom Truck [3.81 h]; Manhole Type 1 - TC [2.55 nr]; Manhole Type 2 - TC [1.7 nr] |
| 5411 | **RHD4-02-002-A015-(TC)-Telecomminications Road Crossings** | 2026-05-30 → 2026-12-20 (+204d) | 2026-06-07 → 2026-12-28 (+204d) |  |  |  |
| RHD4CZ6A015TC3100 | Excavation for Road Crossings for Telecom Network - (RD-A-1 /5)-Z6-A015-TC | 2026-05-30 → 2026-12-20 (+204d) | 2026-05-31 → 2026-12-21 (+204d) |  |  | resources Skilled labor [9.37 h]; Unskilled Labor [9.37 h]; Equipment Opreator [18.73 h]; Excavator-Poclain [9.37 h]; Dump Truck [9.37 h]; Road crossing ducts, (6*50mm) HDPE -TC [1.87 m] → Skilled labor [9.36 h]; Unskilled Labor [9.36 h]; Equipment Opreator [18.72 h]; Excavator-Poclain [9.36 h]; Dump Truck [9.36 h]; Road crossing ducts, (6*50mm) HDPE -TC [1.87 m] |
| RHD4CZ6A015TC3200 | Installation of Road Crossings for Telecom Network - (RD-A-1 /5)-Z6-A015-TC | 2026-06-01 → 2026-12-22 (+204d) | 2026-06-02 → 2026-12-24 (+205d) | 2d → 2.01d |  | resources Carpenter [1.2 h]; Skilled labor [12.52 h]; Unskilled Labor [12.52 h]; Steel Fixer [1.2 h]; Road crossing ducts, (6*50mm) HDPE -TC [1.87 m] → Carpenter [1.2 h]; Skilled labor [12.56 h]; Unskilled Labor [12.56 h]; Steel Fixer [1.2 h]; Road crossing ducts, (6*50mm) HDPE -TC [1.87 m] |
| RHD4CZ6A015TC3300 | Pouring of Road Crossings for Telecom Network - (RD-A-1 /5)-Z6-A015-TC | 2026-06-03 → 2026-12-24 (+204d) | 2026-06-04 → 2026-12-27 (+206d) | 2d → 2.01d |  | resources Skilled labor [12.52 h]; Unskilled Labor [12.52 h]; Equipment Opreator [5.01 h]; Concrete Mixer Truck [2.5 h]; Concrete Pump [2.5 h]; Road crossing ducts, (6*50mm) HDPE -TC [12.16 m] → Skilled labor [12.56 h]; Unskilled Labor [12.56 h]; Equipment Opreator [5.04 h]; Concrete Mixer Truck [2.48 h]; Concrete Pump [2.48 h]; Road crossing ducts, (6*50mm) HDPE -TC [12.16 m] |
| RHD4CZ6A015TC3400 | Backfilling of Road Crossings for Telecom Network - (RD-A-1 /5)-Z6-A015-TC | 2026-06-06 → 2026-12-27 (+204d) | 2026-06-07 → 2026-12-28 (+204d) |  |  | resources Skilled labor [9.37 h]; Unskilled Labor [9.37 h]; Equipment Opreator [3.7 h]; Excavator-Poclain [3.7 h]; Road crossing ducts, (6*50mm) HDPE -TC [2.81 m] → Skilled labor [9.36 h]; Unskilled Labor [9.36 h]; Equipment Opreator [3.68 h]; Excavator-Poclain [3.68 h]; Road crossing ducts, (6*50mm) HDPE -TC [2.81 m] |
| 4845 | **RHD4-02-002-Z6-A015-Information and Communication Technologies - ICT** |  | 2027-06-03 → 2027-12-16 (+196d) |  |  |  |
| 4846 | **RHD4-02-002-A015-(ICT)-Information and Communication Technologies Ducts** | 2027-05-06 → 2027-11-23 (+201d) | 2027-06-03 → 2027-12-16 (+196d) |  |  |  |
| RHD4CZ6A015ICT2100 | Excavation of HDPE Ducts for ICT Network - (RD-A-1 /5)-Z6-A015-ICT | 2027-05-06 → 2027-11-23 (+201d) | 2027-05-12 → 2027-11-29 (+201d) |  |  |  |
| RHD4CZ6A015ICT2200 | Installation of HDPE Ducts for ICT Network - (RD-A-1 /5)-Z6-A015-ICT | 2027-05-13 → 2027-11-30 (+201d) | 2027-05-27 → 2027-12-09 (+196d) |  |  |  |
| RHD4CZ6A015ICT2400 | Backfilling of HDPE Ducts for ICT Network - (RD-A-1 /5)-Z6-A015-ICT | 2027-05-29 → 2027-12-11 (+196d) | 2027-06-03 → 2027-12-16 (+196d) |  |  |  |
| 4847 | **RHD4-02-002-A015-(ICT)-Information and Communication Technologies Manholes** | 2027-05-13 → 2027-11-30 (+201d) | 2027-05-24 → 2027-12-06 (+196d) |  |  |  |
| RHD4CZ6A015ICT5100 | Excavation for Manholes for ICT Network - (RD-A-1 /5)-Z6-A015-ICT | 2027-05-13 → 2027-11-30 (+201d) | 2027-05-20 → 2027-12-02 (+196d) |  |  | resources Skilled labor [9.58 h]; Unskilled Labor [9.58 h]; Equipment Opreator [7.62 h]; Excavator-Poclain [3.81 h]; Dump Truck [3.81 h]; Manhole Type 1 - ICT [0.45 nr]; Manhole Type 2 - ICT [0.3 nr] → Skilled labor [9.6 h]; Unskilled Labor [9.6 h]; Equipment Opreator [7.62 h]; Excavator-Poclain [3.81 h]; Dump Truck [3.81 h]; Manhole Type 1 - ICT [0.45 nr]; Manhole Type 2 - ICT [0.3 nr] |
| RHD4CZ6A015ICT5200 | Installation of Manholes for ICT Network - (RD-A-1 /5)-Z6-A015-ICT | 2027-05-22 → 2027-12-04 (+196d) | 2027-05-24 → 2027-12-06 (+196d) |  |  | resources Skilled labor [9.58 h]; Unskilled Labor [9.58 h]; Equipment Opreator [3.81 h]; Boom Truck [3.81 h]; Manhole Type 1 - ICT [2.55 nr]; Manhole Type 2 - ICT [1.7 nr] → Skilled labor [9.6 h]; Unskilled Labor [9.6 h]; Equipment Opreator [3.81 h]; Boom Truck [3.81 h]; Manhole Type 1 - ICT [2.55 nr]; Manhole Type 2 - ICT [1.7 nr] |
| 4848 | **RHD4-02-002-A015-(ICT)-Information and Communication Technologies Road Crossings** |  | 2026-08-23 → 2026-08-12 (-11d) |  |  |  |
| RHD4CZ6A015ICT3100 | Excavation for Road Crossings for ICT Network - (RD-A-1 /5)-Z6-A015-ICT | 2026-05-30 A | 2026-05-31 → 2026-08-05 A (+66d) |  | 0% → 100% | resources Skilled labor [13.61 h]; Unskilled Labor [13.61 h]; Equipment Opreator [27.12 h]; Excavator-Poclain [13.61 h]; Dump Truck [13.61 h]; Road crossing ducts, (2*50mm) HDPE -ICT [2.49 m] → Skilled labor [13.6 h]; Unskilled Labor [13.6 h]; Equipment Opreator [27.12 h]; Excavator-Poclain [13.6 h]; Dump Truck [13.6 h]; Road crossing ducts, (2*50mm) HDPE -ICT [2.49 m] |
| RHD4CZ6A015ICT3200 | Installation of Road Crossings for ICT Network - (RD-A-1 /5)-Z6-A015-ICT | 2026-08-17 → 2026-08-06 A (-11d) | 2026-08-18 → 2026-08-08 A (-10d) |  | 0% → 100% |  |
| RHD4CZ6A015ICT3300 | Pouring of Road Crossings for ICT Network - (RD-A-1 /5)-Z6-A015-ICT | 2026-08-19 → 2026-08-09 A (-10d) | 2026-08-20 → 2026-08-10 A (-10d) |  | 0% → 100% | resources Skilled labor [18.08 h]; Unskilled Labor [18.08 h]; Equipment Opreator [7.19 h]; Concrete Mixer Truck [3.59 h]; Concrete Pump [3.59 h]; Road crossing ducts, (2*50mm) HDPE -ICT [16.18 m] → Skilled labor [18.08 h]; Unskilled Labor [18.08 h]; Equipment Opreator [7.2 h]; Concrete Mixer Truck [3.59 h]; Concrete Pump [3.59 h]; Road crossing ducts, (2*50mm) HDPE -ICT [16.18 m] |
| RHD4CZ6A015ICT3400 | Backfilling of Road Crossings for ICT Network - (RD-A-1 /5)-Z6-A015-ICT | 2026-08-22 → 2026-08-11 A (-11d) | 2026-08-23 → 2026-08-12 A (-11d) |  | 0% → 100% | resources Skilled labor [13.61 h]; Unskilled Labor [13.61 h]; Equipment Opreator [5.45 h]; Excavator-Poclain [5.45 h]; Road crossing ducts, (2*50mm) HDPE -ICT [3.73 m] → Skilled labor [13.6 h]; Unskilled Labor [13.6 h]; Equipment Opreator [5.45 h]; Excavator-Poclain [5.45 h]; Road crossing ducts, (2*50mm) HDPE -ICT [3.73 m] |
| 4849 | **RHD4-02-002-Z6-A015-Security Network - CCTV** | 2027-06-05 → 2027-12-18 (+196d) | 2027-06-17 → 2027-12-30 (+196d) |  |  |  |
| 4851 | **RHD4-02-002-A015-(CCTV)-CCTV Poles** | 2027-06-05 → 2027-12-18 (+196d) | 2027-06-13 → 2027-12-26 (+196d) |  |  |  |
| RHD4CZ6A015CCTV1100 | Excavation for RC Base for CCTV Poles for Security Network - (RD-A-1 /5)-Z6-A015-CCTV | 2027-06-05 → 2027-12-18 (+196d) | 2027-06-06 → 2027-12-19 (+196d) |  |  |  |
| RHD4CZ6A015CCTV1200 | Installation for RC Base for CCTV Poles for Security Network - (RD-A-1 /5)-Z6-A015-CCTV | 2027-06-07 → 2027-12-20 (+196d) | 2027-06-08 → 2027-12-21 (+196d) |  |  |  |
| RHD4CZ6A015CCTV1300 | Backfill for RC Base for CCTV Poles for Security Network - (RD-A-1 /5)-Z6-A015-CCTV | 2027-06-09 → 2027-12-22 (+196d) | 2027-06-10 → 2027-12-23 (+196d) |  |  |  |
| RHD4CZ6A015CCTV1400 | Installation for CCTV Poles for Security Network - (RD-A-1 /5)-Z6-A015-CCTV | 2027-06-12 → 2027-12-25 (+196d) | 2027-06-13 → 2027-12-26 (+196d) |  |  |  |
| 4852 | **RHD4-02-002-A015-(CCTV)-Camera** | 2027-06-14 → 2027-12-27 (+196d) | 2027-06-15 → 2027-12-28 (+196d) |  |  |  |
| RHD4CZ6A015CCTV3100 | Installation for Cameras for Security Network - (RD-A-1 /5)-Z6-A015-CCTV | 2027-06-14 → 2027-12-27 (+196d) | 2027-06-15 → 2027-12-28 (+196d) |  |  |  |
| 4855 | **RHD4-02-002-A015-(CCTV)-CCTV Panels and Components** | 2027-06-16 → 2027-12-29 (+196d) | 2027-06-17 → 2027-12-30 (+196d) |  |  |  |
| RHD4CZ6A015CCTV6100 | Installation for CCTV Panels for Security Network - (RD-A-1 /5)-Z6-A015-CCTV | 2027-06-16 → 2027-12-29 (+196d) | 2027-06-17 → 2027-12-30 (+196d) |  |  |  |
| 4866 | **RHD4-02-002-Z6-C052** | 2026-07-22 → 2026-04-15 (-98d) | 2027-04-06 → 2027-09-09 (+156d) |  |  |  |
| 5045 | **RHD4-02-002-Z6-C052-Road Works - RD** | 2026-08-26 → 2026-04-15 (-133d) | 2027-04-06 → 2027-09-09 (+156d) |  |  |  |
| 5046 | **RHD4-02-002-C052-(RD)-Subgrade** | 2026-08-26 → 2026-04-15 (-133d) | 2026-09-05 → 2026-05-23 (-105d) |  |  |  |
| RHD4CZ6C052RD1100 | Supply, lay and compaction subgrade compacted thickness 300 mm for Roads - (RD-C-5 /2)-Z6-C052-RD | 2026-08-26 → 2026-04-15 A (-133d) | 2026-09-05 → 2026-05-23 A (-105d) |  | 0% → 100% |  |
| 5047 | **RHD4-02-002-C052-(RD)-Aggregate Base Course** | 2026-09-06 → 2027-03-02 (+177d) | 2026-09-08 → 2027-03-04 (+177d) |  |  |  |
| RHD4CZ6C052RD2100 | Supply, lay and compaction Aggregate base course compacted thickness 300 mmfor Roads - (RD-C-5 /2)-Z6-C052-RD | 2026-09-06 → 2027-03-02 (+177d) | 2026-09-08 → 2027-03-04 (+177d) |  |  | resources Skilled labor [14.38 h]; Unskilled Labor [28.75 h]; Equipment Opreator [181.98 h]; Water Truck [9.47 h]; Roller compactor [28.75 h]; Grader [28.75 h]; Dump Truck [115 h]; Aggregate Base Courses [1172.51 m3] → Skilled labor [14.4 h]; Unskilled Labor [28.75 h]; Equipment Opreator [181.98 h]; Water Truck [9.47 h]; Roller compactor [28.75 h]; Grader [28.75 h]; Dump Truck [115 h]; Aggregate Base Courses [1172.51 m3] |
| 5048 | **RHD4-02-002-C052-(RD)-Bituminous base course Two Layers, including (MC1)&(RC2)** | 2026-09-09 → 2027-03-06 (+178d) | 2027-01-19 → 2027-06-28 (+160d) |  |  |  |
| RHD4CZ6C052RD3100 | Supply, lay and Asphaltic base course including Prime Coat (MC1) for 1st Layer - (RD-C-5 /2)-Z6-C052-RD | 2026-09-09 → 2027-03-06 (+178d) | 2026-09-10 → 2027-03-07 (+178d) |  |  |  |
| RHD4CZ6C052RD3200 | Supply, lay and Asphaltic base course including Tack Coat (RC2) for 2nd Layer - (RD-C-5 /2)-Z6-C052-RD | 2027-01-18 → 2027-06-27 (+160d) | 2027-01-19 → 2027-06-28 (+160d) |  |  |  |
| 5050 | **RHD4-02-002-C052-(RD)-Precast Concrete Curb** | 2027-03-15 → 2027-08-18 (+156d) | 2027-03-17 → 2027-08-21 (+157d) |  |  |  |
| RHD4CZ6C052RD5100 | Supply and installation Precast Concrete Kerb for Roads - (RD-C-5 /2)-Z6-C052-RD | 2027-03-15 → 2027-08-18 (+156d) | 2027-03-17 → 2027-08-21 (+157d) |  |  |  |
| 5053 | **RHD4-02-002-C052-(RD)-Traffic Signage** | 2027-03-27 → 2027-08-30 (+156d) | 2027-04-01 → 2027-09-05 (+157d) |  |  |  |
| RHD4CZ6C052RD8100 | Installation of Traffic Signage for Road Network - (RD-C-5 /2)-Z6-C052-RD | 2027-03-27 → 2027-08-30 (+156d) | 2027-04-01 → 2027-09-05 (+157d) |  |  | resources Skilled labor [130.68 h]; Unskilled Labor [65.34 h]; Electrician [15.25 h]; Equipment Opreator [19.17 h]; Boom Truck [13.07 h]; Concrete Mixer Truck [6.1 h]; Traffic signs, ground mounted, 1 Sheet Aluminium, (breakaway)Single post [13 nr] → Skilled labor [130.68 h]; Unskilled Labor [65.34 h]; Electrician [15.25 h]; Equipment Opreator [19.2 h]; Boom Truck [13.07 h]; Concrete Mixer Truck [6.1 h]; Traffic signs, ground mounted, 1 Sheet Aluminium, (breakaway)Single post [13 nr] |
| 5049 | **RHD4-02-002-C052-(RD)-Bituminous concrete wearing course including tack coat (RC2)** | 2027-03-18 → 2027-08-22 (+157d) | 2027-03-20 → 2027-08-23 (+156d) |  |  |  |
| RHD4CZ6C052RD4100 | Supply, lay and compaction Asphaltic wearing course including tack Coat (RC2)for Road Network - (RD-C-5 /2)-Z6-C052-RD | 2027-03-18 → 2027-08-22 (+157d) | 2027-03-20 → 2027-08-23 (+156d) |  |  |  |
| 5052 | **RHD4-02-002-C052-(RD)-Pavement Marking** | 2027-04-03 → 2027-09-06 (+156d) | 2027-04-06 → 2027-09-09 (+156d) |  |  |  |
| RHD4CZ6C052RD7100 | Pavement Markings for Road Network - (RD-C-5 /2)-Z6-C052-RD | 2027-04-03 → 2027-09-06 (+156d) | 2027-04-06 → 2027-09-09 (+156d) |  |  |  |
| 4870 | **RHD4-02-002-Z6-C052-Storm Network - ST** |  | 2026-09-16 → 2027-03-14 (+179d) |  |  |  |
| 3739 | **RHD4-02-002-C052-(ST)-GRP Pipes - 700 mm diameter** |  | 2026-08-02 → 2027-02-02 (+184d) |  |  |  |
| RHD4CZ6C052ST1103 | Excavation works for GRP Pipe Line 700 mm - (RD-C-5 /2)-Z6-C052-ST | 2026-07-22 A | 2026-07-23 → 2026-08-05 A (+13d) |  | 0% → 100% |  |
| RHD4CZ6C052ST1203 | Bedding works for GRP Pipe Line 700 mm - (RD-C-5 /2)-Z6-C052-ST | 2026-07-25 A | 2026-07-26 → 2026-08-08 A (+13d) |  | 0% → 100% |  |
| RHD4CZ6C052ST1303 | Installing for GRP Pipe Line 700 mm - (RD-C-5 /2)-Z6-C052-ST | 2026-07-27 A | 2026-07-28 → 2026-09-20 A (+54d) |  | 0% → 100% |  |
| RHD4CZ6C052ST1503 | Backfilling and warning tape works for GRP Pipe Line 700 mm - (RD-C-5 /2)-Z6-C052-ST | 2026-08-01 → 2026-08-11 A (+10d) | 2026-08-02 → 2027-02-02 (+184d) |  | 0% → 43% |  |
| RHD4CZ6C052ST1403 | Primary Test for GRP Pipe Line 700 mm - (RD-C-5 /2)-Z6-C052-ST | 2026-07-29 → 2027-01-30 (+185d) | 2026-07-30 → 2027-01-31 (+185d) |  |  |  |
| 4888 | **RHD4-02-002-C052-(ST)-MH Works - 1500 mm diameter** |  | 2026-09-12 → 2027-03-06 (+175d) |  |  |  |
| RHD4CZ6C052ST3101 | Excavation and PC Blinding works for MH 1500 mm - (RD-C-5 /2)-Z6-C052-ST | 2026-07-25 A | 2026-07-26 → 2026-08-06 A (+11d) |  | 0% → 100% |  |
| RHD4CZ6C052ST3201 | Installation of Base for MH 1500 mm - (RD-C-5 /2)-Z6-C052-ST | 2026-07-27 A | 2026-07-28 → 2026-08-10 A (+13d) |  | 0% → 100% |  |
| RHD4CZ6C052ST3301 | MH Ring and C.Slab works and Backfilling works for MH 1500 mm - (RD-C-5 /2)-Z6-C052-ST | 2026-07-29 → 2026-10-20 A (+83d) | 2026-07-30 → 2026-10-21 A (+83d) |  | 0% → 100% |  |
| RHD4CZ6C052ST3401 | Steel Cover for MH 1500 mm - (RD-C-5 /2)-Z6-C052-ST | 2026-09-06 → 2027-02-25 (+172d) | 2026-09-07 → 2027-02-27 (+173d) |  |  |  |
| RHD4CZ6C052ST3501 | Finishing, Benching, Testing works for MH 1500 mm - (RD-C-5 /2)-Z6-C052-ST | 2026-09-10 → 2027-03-04 (+175d) | 2026-09-12 → 2027-03-06 (+175d) |  |  |  |
| 4887 | **RHD4-02-002-C052-(ST)-MH Works - 1200 mm diameter** |  | 2026-09-16 → 2027-03-14 (+179d) |  |  |  |
| RHD4CZ6C052ST3100 | Excavation and PC Blinding works for MH 1200 mm - (RD-C-5 /2)-Z6-C052-ST | 2026-07-27 A | 2026-07-29 → 2026-08-06 A (+8d) |  | 0% → 100% |  |
| RHD4CZ6C052ST3200 | Installation of Base for MH 1200 mm - (RD-C-5 /2)-Z6-C052-ST | 2026-07-30 A | 2026-08-02 → 2026-08-12 A (+10d) |  | 0% → 100% |  |
| RHD4CZ6C052ST3300 | MH Ring and C.Slab works and Backfilling works for MH 1200 mm - (RD-C-5 /2)-Z6-C052-ST | 2026-08-03 → 2026-10-20 A (+78d) | 2026-08-05 → 2026-10-22 A (+78d) |  | 0% → 100% | resources Skilled labor [30.82 h]; Unskilled Labor [30.82 h]; Equipment Opreator [21.56 h]; Boom Truck [12.31 h]; Concrete Mixer Truck [9.26 h]; MH (1200mm Diameter) - ST - depth 1.50 - 2.5m [1.4 nr]; MH (1200mm Diameter) - ST - depth 2.51 - 3.5m [1.05 nr] → Skilled labor [30.82 h]; Unskilled Labor [30.82 h]; Equipment Opreator [21.6 h]; Boom Truck [12.31 h]; Concrete Mixer Truck [9.26 h]; MH (1200mm Diameter) - ST - depth 1.50 - 2.5m [1.4 nr]; MH (1200mm Diameter) - ST - depth 2.51 - 3.5m [1.05 nr] |

| ID | Task | Start | Finish | Complete | Other |
| --- | --- | --- | --- | --- | --- |
| RHD4CZ6C052ST3400 | Steel Cover for MH 1200 mm - (RD-C-5 /2)-Z6-C052-ST | 2026-09-10 → 2027-03-04 (+175d) | 2026-09-13 → 2027-03-07 (+175d) |  |  |
| RHD4CZ6C052ST3500 | Finishing, Benching, Testing works for MH 1200 mm - (RD-C-5 /2)-Z6-C052-ST | 2026-09-14 → 2027-03-08 (+175d) | 2026-09-16 → 2027-03-14 (+179d) |  |  |
| 4873 | **RHD4-02-002-C052-(ST)-GRP Pipes - 600 mm diameter** |  | 2026-08-10 → 2027-01-31 (+174d) |  |  |
| RHD4CZ6C052ST1102 | Excavation works for GRP Pipe Line 600 mm - (RD-C-5 /2)-Z6-C052-ST | 2026-07-30 A | 2026-08-01 → 2026-08-05 A (+4d) | 0% → 100% |  |
| RHD4CZ6C052ST1202 | Bedding works for GRP Pipe Line 600 mm - (RD-C-5 /2)-Z6-C052-ST | 2026-08-02 A | 2026-08-03 → 2026-08-08 A (+5d) | 0% → 100% |  |
| RHD4CZ6C052ST1302 | Installing for GRP Pipe Line 600 mm - (RD-C-5 /2)-Z6-C052-ST | 2026-08-04 A | 2026-08-05 → 2026-08-10 A (+5d) | 0% → 100% |  |
| RHD4CZ6C052ST1502 | Backfilling and warning tape works for GRP Pipe Line 600 mm - (RD-C-5 /2)-Z6-C052-ST | 2026-08-09 A | 2026-08-10 → 2026-08-12 A (+2d) | 0% → 100% |  |
| RHD4CZ6C052ST1402 | Primary Test for GRP Pipe Line 600 mm - (RD-C-5 /2)-Z6-C052-ST | 2026-08-06 → 2027-01-30 (+177d) | 2026-08-08 → 2027-01-31 (+176d) |  |  |
| 4872 | **RHD4-02-002-C052-(ST)-GRP Pipes - 500 mm diameter** |  | 2026-08-12 → 2027-01-31 (+172d) |  |  |
| RHD4CZ6C052ST1101 | Excavation works for GRP Pipe Line 500 mm - (RD-C-5 /2)-Z6-C052-ST | 2026-08-02 A | 2026-08-03 → 2026-08-05 A (+2d) | 0% → 100% |  |
| RHD4CZ6C052ST1201 | Bedding works for GRP Pipe Line 500 mm - (RD-C-5 /2)-Z6-C052-ST | 2026-08-04 A | 2026-08-05 → 2026-08-08 A (+3d) | 0% → 100% |  |
| RHD4CZ6C052ST1301 | Installing for GRP Pipe Line 500 mm - (RD-C-5 /2)-Z6-C052-ST | 2026-08-06 A | 2026-08-08 → 2026-08-10 A (+2d) | 0% → 100% |  |
| RHD4CZ6C052ST1501 | Backfilling and warning tape works for GRP Pipe Line 500 mm - (RD-C-5 /2)-Z6-C052-ST | 2026-08-11 A | 2026-08-12 A | 0% → 100% |  |
| RHD4CZ6C052ST1401 | Primary Test for GRP Pipe Line 500 mm - (RD-C-5 /2)-Z6-C052-ST | 2026-08-09 → 2026-09-15 A (+37d) | 2026-08-10 → 2027-01-31 (+174d) | 0% → 75% |  |
| 4871 | **RHD4-02-002-C052-(ST)-GRP Pipes - 400 mm diameter** |  | 2026-08-15 → 2026-09-19 (+35d) |  |  |
| RHD4CZ6C052ST1100 | Excavation works for GRP Pipe Line 400 mm - (RD-C-5 /2)-Z6-C052-ST | 2026-08-04 A | 2026-08-05 A | 0% → 100% | resources Skilled labor [6.43 h]; Unskilled Labor [6.43 h]; Equipment Opreator [7.62 h]; Excavator-Poclain [6.43 h]; Dump Truck [1.31 h]; GRP (400mm Diameter) - ST - Depth less than 1.5 m [13.68 m]; GRP (400mm Diameter) - ST - Depth: 1.51m - 2.5 m → Skilled labor [6.4 h]; Unskilled Labor [6.4 h]; Equipment Opreator [7.62 h]; Excavator-Poclain [6.4 h]; Dump Truck [1.31 h]; GRP (400mm Diameter) - ST - Depth less than 1.5 m [13.68 m]; GRP (400mm Diameter) - ST - Depth: 1.51m - 2.5 m |
| RHD4CZ6C052ST1200 | Bedding works for GRP Pipe Line 400 mm - (RD-C-5 /2)-Z6-C052-ST | 2026-08-06 A | 2026-08-08 A | 0% → 100% |  |
| RHD4CZ6C052ST1300 | Installing for GRP Pipe Line 400 mm - (RD-C-5 /2)-Z6-C052-ST | 2026-08-09 A | 2026-08-10 → 2026-09-15 A (+36d) | 0% → 100% |  |
| RHD4CZ6C052ST1400 | Primary Test for GRP Pipe Line 400 mm - (RD-C-5 /2)-Z6-C052-ST | 2026-08-11 A | 2026-08-12 → 2026-09-19 A (+38d) | 0% → 100% |  |
| RHD4CZ6C052ST1500 | Backfilling and warning tape works for GRP Pipe Line 400 mm - (RD-C-5 /2)-Z6-C052-ST | 2026-08-13 → 2026-08-11 A (-2d) | 2026-08-15 → 2026-09-15 A (+31d) | 0% → 100% |  |
| 4886 | **RHD4-02-002-C052-(ST)-UPVC Pipes - 400 mm diameter** |  | 2026-09-05 → 2027-02-15 (+163d) |  |  |
| RHD4CZ6C052ST2101 | Excavation works for UPVC Pipe Line 400 mm - (RD-C-5 /2)-Z6-C052-ST | 2026-08-22 A | 2026-08-23 → 2026-09-16 A (+24d) | 0% → 100% | resources Skilled labor [0.76 h]; Unskilled Labor [0.76 h]; Equipment Opreator [0.87 h]; Excavator-Poclain [0.76 h]; Dump Truck [0.11 h]; UPVC (400mm Diameter) - ST - Depth less than 1.5 [1.39 m]; UPVC (400mm Diameter) - ST - Depth: 1.51m - 2.5m → Skilled labor [0.8 h]; Unskilled Labor [0.8 h]; Equipment Opreator [0.87 h]; Excavator-Poclain [0.8 h]; Dump Truck [0.11 h]; UPVC (400mm Diameter) - ST - Depth less than 1.5 [1.39 m]; UPVC (400mm Diameter) - ST - Depth: 1.51m - 2.5m |
| RHD4CZ6C052ST2201 | Bedding works for UPVC Pipe Line 400 mm - (RD-C-5 /2)-Z6-C052-ST | 2026-08-24 A | 2026-08-25 → 2026-09-19 A (+25d) | 0% → 100% | resources Skilled labor [0.76 h]; Unskilled Labor [1.42 h]; Equipment Opreator [1.42 h]; Excavator-Poclain [0.76 h]; Dump Truck [0.76 h]; UPVC (400mm Diameter) - ST - Depth less than 1.5 [0.69 m]; UPVC (400mm Diameter) - ST - Depth: 1.51m - 2.5m → Skilled labor [0.8 h]; Unskilled Labor [1.42 h]; Equipment Opreator [1.42 h]; Excavator-Poclain [0.8 h]; Dump Truck [0.8 h]; UPVC (400mm Diameter) - ST - Depth less than 1.5 [0.69 m]; UPVC (400mm Diameter) - ST - Depth: 1.51m - 2.5m |
| RHD4CZ6C052ST2301 | Installing for UPVC Pipe Line 400 mm - (RD-C-5 /2)-Z6-C052-ST | 2026-08-26 A | 2026-08-27 → 2026-09-20 A (+24d) | 0% → 100% | resources Unskilled Labor [1.52 h]; Plumber [0.76 h]; UPVC (400mm Diameter) - ST - Depth less than 1.5 [6.24 m]; UPVC (400mm Diameter) - ST - Depth: 1.51m - 2.5m → Unskilled Labor [1.52 h]; Plumber [0.8 h]; UPVC (400mm Diameter) - ST - Depth less than 1.5 [6.24 m]; UPVC (400mm Diameter) - ST - Depth: 1.51m - 2.5m |
| RHD4CZ6C052ST2501 | Backfilling and warning tape works for UPVC Pipe Line 400 mm - (RD-C-5 /2)-Z6-C052-ST | 2026-09-03 A | 2026-09-05 A | 0% → 100% | resources Skilled labor [0.76 h]; Unskilled Labor [1.52 h]; Equipment Opreator [1.52 h]; Excavator-Poclain [0.76 h]; Dump Truck [0.76 h]; UPVC (400mm Diameter) - ST - Depth less than 1.5 [2.77 m]; UPVC (400mm Diameter) - ST - Depth: 1.51m - 2.5m → Skilled labor [0.8 h]; Unskilled Labor [1.52 h]; Equipment Opreator [1.52 h]; Excavator-Poclain [0.8 h]; Dump Truck [0.8 h]; UPVC (400mm Diameter) - ST - Depth less than 1.5 [2.77 m]; UPVC (400mm Diameter) - ST - Depth: 1.51m - 2.5m |
| RHD4CZ6C052ST2401 | Primary Test for UPVC Pipe Line 400 mm - (RD-C-5 /2)-Z6-C052-ST | 2026-08-29 → 2027-02-14 (+169d) | 2026-08-30 → 2027-02-15 (+169d) |  | resources Unskilled Labor [0.76 h]; Plumber [0.76 h]; Equipment Opreator [0.76 h]; Water Truck [0.76 h]; UPVC (400mm Diameter) - ST - Depth less than 1.5 [2.77 m]; UPVC (400mm Diameter) - ST - Depth: 1.51m - 2.5m → Unskilled Labor [0.8 h]; Plumber [0.8 h]; Equipment Opreator [0.8 h]; Water Truck [0.8 h]; UPVC (400mm Diameter) - ST - Depth less than 1.5 [2.77 m]; UPVC (400mm Diameter) - ST - Depth: 1.51m - 2.5m |
| 4885 | **RHD4-02-002-C052-(ST)-UPVC Pipes - 300 mm diameter** | 2026-08-24 → 2026-08-04 (-20d) | 2026-09-09 → 2027-03-03 (+175d) |  |  |
| RHD4CZ6C052ST2100 | Excavation works for UPVC Pipe Line 300 mm - (RD-C-5 /2)-Z6-C052-ST | 2026-08-24 → 2026-08-04 A (-20d) | 2026-08-26 → 2027-02-16 (+174d) | 0% → 64% |  |
| RHD4CZ6C052ST2200 | Bedding works for UPVC Pipe Line 300 mm - (RD-C-5 /2)-Z6-C052-ST | 2026-08-27 → 2026-08-06 A (-21d) | 2026-08-30 → 2027-02-20 (+174d) | 0% → 73% |  |
| RHD4CZ6C052ST2300 | Installing for UPVC Pipe Line 300 mm - (RD-C-5 /2)-Z6-C052-ST | 2026-08-31 → 2026-08-10 A (-21d) | 2026-09-02 → 2027-02-24 (+175d) | 0% → 75% |  |
| RHD4CZ6C052ST2500 | Backfilling and warning tape works for UPVC Pipe Line 300 mm - (RD-C-5 /2)-Z6-C052-ST | 2026-09-06 → 2026-08-12 A (-25d) | 2026-09-09 → 2027-03-03 (+175d) | 0% → 73% |  |
| RHD4CZ6C052ST2400 | Primary Test for UPVC Pipe Line 300 mm - (RD-C-5 /2)-Z6-C052-ST | 2026-09-03 → 2027-02-25 (+175d) | 2026-09-05 → 2027-02-27 (+175d) |  |  |
| 4893 | **RHD4-02-002-C052-(ST)-Concrete Encasement** | 2026-09-01 → 2027-02-23 (+175d) | 2026-09-02 → 2027-02-24 (+175d) |  |  |
| RHD4CZ6C052ST6100 | Pipe Encasement for Storm Pipelines - (RD-C-5 /2)-Z6-C052-ST | 2026-09-01 → 2027-02-23 (+175d) | 2026-09-02 → 2027-02-24 (+175d) |  |  |
| 4894 | **RHD4-02-002-Z6-C052-Catch Basin - ST** | 2026-08-06 → 2026-08-04 (-2d) | 2026-09-03 → 2027-02-28 (+178d) |  |  |
| 4895 | **RHD4-02-002-C052-(ST)-Single Catch Basin Works** | 2026-08-06 → 2026-08-04 (-2d) | 2026-09-03 → 2027-02-28 (+178d) |  |  |
| RHD4CZ6C052ST7100 | Excavation works for Single Catch Basin - (RD-C-5 /2)-Z6-C052-ST | 2026-08-06 → 2026-08-04 A (-2d) | 2026-08-10 → 2027-02-02 (+176d) | 0% → 74% |  |
| RHD4CZ6C052ST7200 | PC Blinding, Installation and Pipe connection for Single Catch Basin - (RD-C-5 /2)-Z6-C052-ST | 2026-08-11 → 2026-08-06 A (-5d) | 2026-08-15 → 2027-02-07 (+176d) | 0% → 74% |  |
| RHD4CZ6C052ST7300 | Rings & C.Slab & Final Backfill for Single Catch Basin - (RD-C-5 /2)-Z6-C052-ST | 2026-08-16 → 2026-10-27 A (+72d) | 2026-08-20 → 2027-02-13 (+177d) | 0% → 68% |  |
| RHD4CZ6C052ST7400 | Steel Cover for Single Catch Basin - (RD-C-5 /2)-Z6-C052-ST | 2026-08-22 → 2027-02-14 (+176d) | 2026-08-25 → 2027-02-17 (+176d) |  |  |
| RHD4CZ6C052ST7500 | Finishing and Insulation works for Single Catch Basin - (RD-C-5 /2)-Z6-C052-ST | 2026-08-26 → 2027-02-18 (+176d) | 2026-09-03 → 2027-02-28 (+178d) |  |  |
| 4896 | **RHD4-02-002-C052-(ST)-Double Catch Basin Works** | 2026-08-11 → 2026-08-04 (-7d) | 2026-08-30 → 2027-02-23 (+177d) |  |  |
| RHD4CZ6C052ST8100 | Excavation works for Double Catch Basin - (RD-C-5 /2)-Z6-C052-ST | 2026-08-11 → 2026-08-04 A (-7d) | 2026-08-12 → 2026-08-06 A (-6d) | 0% → 100% |  |
| RHD4CZ6C052ST8200 | PC Blinding, Installation and Pipe connection for Double Catch Basin - (RD-C-5 /2)-Z6-C052-ST | 2026-08-13 → 2026-08-06 A (-7d) | 2026-08-15 → 2026-08-09 A (-6d) | 0% → 100% |  |
| RHD4CZ6C052ST8300 | Rings & C.Slab & Final Backfillfor Double Catch Basin - (RD-C-5 /2)-Z6-C052-ST | 2026-08-16 → 2027-02-03 (+171d) | 2026-08-17 → 2027-02-04 (+171d) |  |  |
| RHD4CZ6C052ST8400 | Steel Cover for Double Catch Basin - (RD-C-5 /2)-Z6-C052-ST | 2026-08-26 → 2027-02-18 (+176d) | 2026-08-27 → 2027-02-20 (+177d) |  |  |
| RHD4CZ6C052ST8500 | Finishing and Insulation works for Double Catch Basin - (RD-C-5 /2)-Z6-C052-ST | 2026-08-29 → 2027-02-21 (+176d) | 2026-08-30 → 2027-02-23 (+177d) |  |  |
| 4299 | **RHD4-02-002-Z6-C052-Concrete Box Culvert - ST** | 2026-09-06 → 2026-06-11 (-87d) | 2026-12-05 → 2027-03-18 (+103d) |  |  |
| 4300 | **RHD4-02-002-C052-(ST)-Concrete Box Culvert** | 2026-09-06 → 2026-06-11 (-87d) | 2026-12-05 → 2026-10-10 (-56d) |  |  |
| RHD4CZ6C052ST4100 | Excavation works for Box Culvert - (RD-C-5/2)-Z6-C052-ST(Completed) | 2026-09-06 → 2026-06-11 A (-87d) | 2026-10-29 → 2026-06-13 A (-138d) | 0% → 100% |  |
| RHD4CZ6C052ST4200 | PC works for Box Culvert - (RD-C-5/2)-Z6-C052-ST(Completed) | 2026-09-06 → 2026-06-15 A (-83d) | 2026-10-26 → 2026-06-18 A (-130d) | 0% → 100% |  |
| RHD4CZ6C052ST4400 | Raft works for Box Culvert - (RD-C-5/2)-Z6-C052-ST(Completed) | 2026-09-06 → 2026-07-11 A (-57d) | 2026-09-30 → 2026-07-16 A (-76d) | 0% → 100% |  |
| RHD4CZ6C052ST4500 | Wall and slab works for Box Culvert - (RD-C-5/2)-Z6-C052-ST | 2026-10-31 → 2026-08-04 A (-88d) | 2026-11-04 → 2026-09-22 A (-43d) | 0% → 100% | resources Carpenter [36.16 h]; Skilled labor [44.54 h]; Steel Fixer [8.39 h]; Equipment Opreator [74.05 h]; Boom Truck [1.63 h]; Concrete Mixer Truck [36.16 h]; Concrete Pump [36.16 h]; Supply and cast in place reinforced concrete for Box culverts - ST [332.28 m3]; Supply, placing, and fixing of high tensile reinforcement steel for Box culverts - ST [91.95 Ton] → Carpenter [36.16 h]; Skilled labor [44.54 h]; Steel Fixer [8.39 h]; Equipment Opreator [74.05 h]; Boom Truck [1.6 h]; Concrete Mixer Truck [36.16 h]; Concrete Pump [36.16 h]; Supply and cast in place reinforced concrete for Box culverts - ST [332.28 m3]; Supply, placing, and fixing of high tensile reinforcement steel for Box culverts - ST [91.95 Ton] |
| RHD4CZ6C052ST4600 | Insulation and Testing for Box Culvert - (RD-C-5/2)-Z6-C052-ST | 2026-12-01 → 2026-09-19 A (-73d) | 2026-12-05 → 2026-09-25 A (-71d) | 0% → 100% |  |
| RHD4CZ6C052ST4700 | Backfilling works for Box Culvert - (RD-C-5/2)-Z6-C052-ST | 2026-11-16 → 2026-09-26 A (-51d) | 2026-11-30 → 2026-10-10 A (-51d) | 0% → 100% |  |
| 4301 | **RHD4-02-002-C052-(ST)-Concrete Chambers** | 2026-11-05 → 2026-08-20 (-77d) | 2026-11-18 → 2027-03-18 (+120d) |  |  |
| RHD4CZ6C052ST5100 | Excavation and Bedding for Concrete Chambers - for Box Culvert - (RD-C-5/2)-Z6-C052-ST | 2026-11-05 → 2026-08-20 A (-77d) | 2026-11-08 → 2027-03-04 (+116d) | 0% → 50% |  |
| RHD4CZ6C052ST5200 | PC works for Concrete Chambers - for Box Culvert - (RD-C-5/2)-Z6-C052-ST | 2026-11-09 → 2026-08-25 A (-76d) | 2026-11-11 → 2027-03-08 (+117d) | 0% → 50% |  |
| RHD4CZ6C052ST5300 | Installation for Concrete Chambers - for Box Culvert - (RD-C-5/2)-Z6-C052-ST | 2026-11-12 → 2026-08-30 A (-74d) | 2026-11-15 → 2027-03-15 (+120d) | 0% → 50% |  |
| RHD4CZ6C052ST5400 | Backfilling works for Concrete Chambers - for Box Culvert - (RD-C-5/2)-Z6-C052-ST | 2026-11-16 → 2027-03-16 (+120d) | 2026-11-18 → 2027-03-18 (+120d) |  |  |
| 4919 | **RHD4-02-002-Z6-C052-Sewage Network - SW** | 2026-08-27 → 2026-08-08 (-19d) | 2026-09-22 → 2027-03-04 (+163d) |  |  |
| 4929 | **RHD4-02-002-C052-(SW)-MH Works - 1200 mm diameter** | 2026-08-27 → 2026-08-08 (-19d) | 2026-09-22 → 2027-03-04 (+163d) |  |  |
| RHD4CZ6C052SW3100 | Excavation and PC Blinding works for MH 1200 mm - (RD-C-5 /2)-Z6-C052-SW | 2026-08-27 → 2026-08-08 A (-19d) | 2026-09-01 → 2026-09-20 A (+19d) | 0% → 100% |  |
| RHD4CZ6C052SW3200 | Installation of Base for MH 1200 mm - (RD-C-5 /2)-Z6-C052-SW | 2026-09-02 → 2026-08-10 A (-23d) | 2026-09-07 → 2026-09-22 A (+15d) | 0% → 100% |  |
| RHD4CZ6C052SW3300 | MH Ring and C.Slab works and Backfilling works for MH 1200 mm - (RD-C-5 /2)-Z6-C052-SW | 2026-09-08 → 2027-02-17 (+162d) | 2026-09-13 → 2027-02-23 (+163d) |  |  |
| RHD4CZ6C052SW3400 | Steel Cover for MH 1200 mm - (RD-C-5 /2)-Z6-C052-SW | 2026-09-14 → 2027-02-24 (+163d) | 2026-09-16 → 2027-02-27 (+164d) |  |  |
| RHD4CZ6C052SW3500 | Finishing, Benching, Testing works for MH 1200 mm - (RD-C-5 /2)-Z6-C052-SW | 2026-09-17 → 2027-02-28 (+164d) | 2026-09-22 → 2027-03-04 (+163d) |  |  |
| 4925 | **RHD4-02-002-C052-(SW)-UPVC Pipes - 200 mm diameter** | 2026-09-08 → 2026-08-11 (-28d) | 2026-09-22 → 2027-03-01 (+160d) |  |  |
| RHD4CZ6C052SW2100 | Excavation works for UPVC Pipe Line 200 mm - (RD-C-5 /2)-Z6-C052-SW | 2026-09-08 → 2026-08-11 A (-28d) | 2026-09-09 → 2026-08-15 A (-25d) | 0% → 100% |  |
| RHD4CZ6C052SW2200 | Bedding works for UPVC Pipe Line 200 mm - (RD-C-5 /2)-Z6-C052-SW | 2026-09-10 → 2026-08-13 A (-28d) | 2026-09-12 → 2026-08-16 A (-27d) | 0% → 100% |  |

| ID | Task | Start | Finish | Complete | Other |
| --- | --- | --- | --- | --- | --- |
| RHD4CZ6C052SW2300 | Installing for UPVC Pipe Line 200 mm - (RD-C-5 /2)-Z6-C052-SW | 2026-09-14 → 2026-08-15 A (-30d) | 2026-09-16 → 2026-08-17 A (-30d) | 0% → 100% |  |
| RHD4CZ6C052SW2500 | Backfilling and warning tape works for UPVC Pipe Line 200 mm - (RD-C-5 /2)-Z6-C052-SW | 2026-09-20 → 2026-08-16 A (-35d) | 2026-09-22 → 2027-03-01 (+160d) | 0% → 61% |  |
| RHD4CZ6C052SW2400 | Primary Test for UPVC Pipe Line 200 mm - (RD-C-5 /2)-Z6-C052-SW | 2026-09-17 → 2026-09-20 A (+3d) | 2026-09-19 → 2027-02-25 (+159d) | 0% → 31% |  |
| 4956 | **RHD4-02-002-Z6-C052-Potable Network - PT** | 2026-09-24 → 2026-08-04 (-51d) | 2026-10-22 → 2027-04-03 (+163d) |  |  |
| 4957 | **RHD4-02-002-C052-(PT)-HDPE Pipes - 110 mm diameter** | 2026-09-27 → 2026-08-04 (-54d) | 2026-10-11 → 2027-03-22 (+162d) |  |  |
| RHD4CZ6C052PT1100 | Excavation works for HDPE Pipline 110 mm - (RD-C-5 /2)-Z6-C052-PT | 2026-09-27 → 2026-08-04 A (-54d) | 2026-09-28 → 2027-03-06 (+159d) | 0% → 81% |  |
| RHD4CZ6C052PT1200 | Bedding works for HDPE Pipline 110 mm - (RD-C-5 /2)-Z6-C052-PT | 2026-09-29 → 2026-08-06 A (-54d) | 2026-09-30 → 2027-03-08 (+159d) | 0% → 81% |  |
| RHD4CZ6C052PT1300 | Installing for HDPE Pipline 110 mm - (RD-C-5 /2)-Z6-C052-PT | 2026-10-03 → 2026-08-08 A (-56d) | 2026-10-04 → 2027-03-15 (+162d) | 0% → 81% |  |
| RHD4CZ6C052PT1400 | Primary Test for HDPE Pipline 110 mm - (RD-C-5 /2)-Z6-C052-PT | 2026-10-07 → 2027-03-18 (+162d) | 2026-10-08 → 2027-03-20 (+163d) |  |  |
| RHD4CZ6C052PT1500 | Backfilling and warning tape works for HDPE Pipline 110 mm - (RD-C-5 /2)-Z6-C052-PT | 2026-10-10 → 2027-03-21 (+162d) | 2026-10-11 → 2027-03-22 (+162d) |  |  |
| 3643 | **RHD4-02-002-C052-(PT)-Air Valve Chambers** | 2026-09-29 → 2027-03-07 (+159d) | 2026-10-07 → 2027-03-25 (+169d) |  |  |
| RHD4CZ6C052PT2102 | Excavation and Bedding for Air Valve Chambers for Potable Water Network - (RD-C-5 /2)-Z6-C052-PT | 2026-09-29 → 2027-03-07 (+159d) | 2026-09-30 → 2027-03-08 (+159d) |  |  |
| RHD4CZ6C052PT2202 | PC works for Air Valve Chambers for Potable Water Network - (RD-C-5 /2)-Z6-C052-PT | 2026-10-01 → 2027-03-20 (+170d) | 2026-10-03 → 2027-03-21 (+169d) |  |  |
| RHD4CZ6C052PT2302 | Installation for Air Valve Chambers for Potable Water Network - (RD-C-5 /2)-Z6-C052-PT | 2026-10-04 → 2027-03-22 (+169d) | 2026-10-05 → 2027-03-23 (+169d) |  |  |
| RHD4CZ6C052PT2402 | Backfilling works for Air Valve Chambers for Potable Water Network - (RD-C-5 /2)-Z6-C052-PT | 2026-10-06 → 2027-03-24 (+169d) | 2026-10-07 → 2027-03-25 (+169d) |  |  |
| 3644 | **RHD4-02-002-C052-(PT)-Air Valves** | 2026-10-06 → 2027-03-24 (+169d) | 2026-10-10 → 2027-03-28 (+169d) |  |  |
| RHD4CZ6C052PT3103 | Installation for Air Valves for Potable Water Network - (RD-C-5 /2)-Z6-C052-PT | 2026-10-06 → 2027-03-24 (+169d) | 2026-10-07 → 2027-03-25 (+169d) |  |  |
| RHD4CZ6C052PT3203 | Stem and Service box for Air Valves for Potable Water Network - (RD-C-5 /2)-Z6-C052-PT | 2026-10-08 → 2027-03-27 (+170d) | 2026-10-10 → 2027-03-28 (+169d) |  |  |
| 4962 | **RHD4-02-002-C052-(PT)-Gate Valves (Direct Buried)** | 2026-10-03 → 2027-03-14 (+162d) | 2026-10-13 → 2027-03-24 (+162d) |  |  |
| RHD4CZ6C052PT3100 | Installation for Direct Buried Gate Valves - (RD-C-5 /2)-Z6-C052-PT | 2026-10-03 → 2027-03-14 (+162d) | 2026-10-04 → 2027-03-15 (+162d) |  |  |
| RHD4CZ6C052PT3200 | Stem and Service box for Direct Buried Gate Valves - (RD-C-5 /2)-Z6-C052-PT | 2026-10-12 → 2027-03-23 (+162d) | 2026-10-13 → 2027-03-24 (+162d) |  |  |
| 4965 | **RHD4-02-002-C052-(PT)-Wash out Valve Chambers** | 2026-09-29 → 2027-03-07 (+159d) | 2026-10-07 → 2027-03-18 (+162d) |  |  |
| RHD4CZ6C052PT2101 | Excavation and Bedding for Wash out Valve Chambers for Potable Water Network - (RD-C-5 /2)-Z6-C052-PT | 2026-09-29 → 2027-03-07 (+159d) | 2026-09-30 → 2027-03-08 (+159d) |  |  |
| RHD4CZ6C052PT2201 | PC works for Wash out Valve Chambers for Potable Water Network - (RD-C-5 /2)-Z6-C052-PT | 2026-10-01 → 2027-03-13 (+163d) | 2026-10-03 → 2027-03-14 (+162d) |  |  |
| RHD4CZ6C052PT2301 | Installation for Wash out Valve Chambers for Potable Water Network - (RD-C-5 /2)-Z6-C052-PT | 2026-10-04 → 2027-03-15 (+162d) | 2026-10-05 → 2027-03-16 (+162d) |  |  |
| RHD4CZ6C052PT2401 | Backfilling works for Wash out Valve Chambers for Potable Water Network - (RD-C-5 /2)-Z6-C052-PT | 2026-10-06 → 2027-03-17 (+162d) | 2026-10-07 → 2027-03-18 (+162d) |  |  |
| 4966 | **RHD4-02-002-C052-(PT)-Wash out Valves** | 2026-10-06 → 2027-03-17 (+162d) | 2026-10-10 → 2027-03-21 (+162d) |  |  |
| RHD4CZ6C052PT3102 | Installation for Wash out Valves for Potable Water Network - (RD-C-5 /2)-Z6-C052-PT | 2026-10-06 → 2027-03-17 (+162d) | 2026-10-07 → 2027-03-18 (+162d) |  |  |
| RHD4CZ6C052PT3202 | Stem and Service box for Wash out Valves for Potable Water Network - (RD-C-5 /2)-Z6-C052-PT | 2026-10-08 → 2027-03-20 (+163d) | 2026-10-10 → 2027-03-21 (+162d) |  |  |
| 4969 | **RHD4-02-002-C052-(PT)-Fire Hydrant** | 2026-10-12 → 2027-03-23 (+162d) | 2026-10-22 → 2027-04-03 (+163d) |  |  |
| RHD4CZ6C052PT4100 | Excavation and Bedding and Pipe Installation for Fire Hydrant - (RD-C-5 /2)-Z6-C052-PT | 2026-10-12 → 2027-03-23 (+162d) | 2026-10-13 → 2027-03-24 (+162d) |  |  |
| RHD4CZ6C052PT4200 | Valve Installation for Fire Hydrant - (RD-C-5 /2)-Z6-C052-PT | 2026-10-14 → 2027-03-25 (+162d) | 2026-10-15 → 2027-03-27 (+163d) |  |  |
| RHD4CZ6C052PT4300 | Stem for Fire Hydrant - (RD-C-5 /2)-Z6-C052-PT | 2026-10-17 → 2027-03-28 (+162d) | 2026-10-18 → 2027-03-29 (+162d) |  |  |
| RHD4CZ6C052PT4400 | Fire Installation for Fire Hydrant - (RD-C-5 /2)-Z6-C052-PT | 2026-10-19 → 2027-03-30 (+162d) | 2026-10-20 → 2027-03-31 (+162d) |  |  |
| RHD4CZ6C052PT4500 | Protection Barriers for Fire Hydrant - (RD-C-5 /2)-Z6-C052-PT | 2026-10-21 → 2027-04-01 (+162d) | 2026-10-22 → 2027-04-03 (+163d) |  |  |
| 4970 | **RHD4-02-002-C052-(PT)-Concrete Encasement** | 2026-10-03 → 2027-03-14 (+162d) | 2026-10-04 → 2027-03-15 (+162d) |  |  |
| RHD4CZ6C052PT5100 | Pipe Encasement for Potable Pipelines - (RD-C-5 /2)-Z6-C052-PT | 2026-10-03 → 2027-03-14 (+162d) | 2026-10-04 → 2027-03-15 (+162d) |  |  |
| 4958 | **RHD4-02-002-C052-(PT)-HDPE Pipes - 160 mm diameter** | 2026-09-24 → 2026-08-04 (-51d) | 2026-10-08 → 2027-03-20 (+163d) |  |  |
| RHD4CZ6C052PT1101 | Excavation works for HDPE Pipline 160 mm - (RD-C-5 /2)-Z6-C052-PT | 2026-09-24 → 2026-08-04 A (-51d) | 2026-09-26 → 2027-03-03 (+158d) | 0% → 8% |  |
| RHD4CZ6C052PT1201 | Bedding works for HDPE Pipline 160 mm - (RD-C-5 /2)-Z6-C052-PT | 2026-09-27 → 2026-08-06 A (-52d) | 2026-09-28 → 2027-03-06 (+159d) | 0% → 8% |  |
| RHD4CZ6C052PT1301 | Installing for HDPE Pipline 160 mm - (RD-C-5 /2)-Z6-C052-PT | 2026-09-29 → 2026-08-08 A (-52d) | 2026-10-01 → 2027-03-13 (+163d) | 0% → 8% |  |
| RHD4CZ6C052PT1401 | Primary Test for HDPE Pipline 160 mm - (RD-C-5 /2)-Z6-C052-PT | 2026-10-05 → 2027-03-16 (+162d) | 2026-10-06 → 2027-03-17 (+162d) |  |  |
| RHD4CZ6C052PT1501 | Backfilling and warning tape works for HDPE Pipline 160 mm - (RD-C-5 /2)-Z6-C052-PT | 2026-10-07 → 2027-03-18 (+162d) | 2026-10-08 → 2027-03-20 (+163d) |  |  |
| 4971 | **RHD4-02-002-Z6-C052-Irrigation Network - IRR** | 2026-10-14 → 2026-08-04 (-71d) | 2026-11-03 → 2027-04-14 (+162d) |  |  |
| 4972 | **RHD4-02-002-C052-(IRR)-HDPE Pipes - 160 mm diameter** | 2026-10-14 → 2026-08-04 (-71d) | 2026-11-01 → 2027-04-12 (+162d) |  |  |
| RHD4CZ6C052IRR1100 | Excavation works for HDPE Pipline 160 mm - (RD-C-5 /2)-Z6-C052-IRR | 2026-10-14 → 2026-08-04 A (-71d) | 2026-10-18 → 2027-03-29 (+162d) | 0% → 8% |  |
| RHD4CZ6C052IRR1200 | Bedding works for HDPE Pipline 160 mm - (RD-C-5 /2)-Z6-C052-IRR | 2026-10-19 → 2026-08-06 A (-74d) | 2026-10-21 → 2027-04-01 (+162d) | 0% → 10% |  |
| RHD4CZ6C052IRR1300 | Installing for HDPE Pipline 160 mm - (RD-C-5 /2)-Z6-C052-IRR | 2026-10-22 → 2026-08-08 A (-75d) | 2026-10-26 → 2027-04-06 (+162d) | 0% → 6% |  |
| RHD4CZ6C052IRR1400 | Primary Test for HDPE Pipline 160 mm - (RD-C-5 /2)-Z6-C052-IRR | 2026-10-27 → 2027-04-07 (+162d) | 2026-10-28 → 2027-04-08 (+162d) |  |  |
| RHD4CZ6C052IRR1500 | Backfilling and warning tape works for HDPE Pipline 160 mm - (RD-C-5 /2)-Z6-C052-IRR | 2026-10-29 → 2027-04-10 (+163d) | 2026-11-01 → 2027-04-12 (+162d) |  |  |
| 6685 | **RHD4-02-002-C052-(IRR)-Wash out Chamber** | 2026-10-14 → 2027-03-25 (+162d) | 2026-10-22 → 2027-04-03 (+163d) |  |  |
| RHD4CZ6C052IRR2101 | Excavation and Bedding for Wash out Chamber for Irrigation Network - (RD-C-5 /2)-Z6-C052-IRR | 2026-10-14 → 2027-03-25 (+162d) | 2026-10-15 → 2027-03-27 (+163d) |  |  |
| RHD4CZ6C052IRR2201 | PC works for Wash out Chamber for Irrigation Network - (RD-C-5 /2)-Z6-C052-IRR | 2026-10-17 → 2027-03-28 (+162d) | 2026-10-18 → 2027-03-29 (+162d) |  |  |
| RHD4CZ6C052IRR2301 | Installation for Wash out Chamber for Irrigation Network - (RD-C-5 /2)-Z6-C052-IRR | 2026-10-19 → 2027-03-30 (+162d) | 2026-10-20 → 2027-03-31 (+162d) |  |  |
| RHD4CZ6C052IRR2401 | Backfilling works for Wash out Chamber for Irrigation Network - (RD-C-5 /2)-Z6-C052-IRR | 2026-10-21 → 2027-04-01 (+162d) | 2026-10-22 → 2027-04-03 (+163d) |  |  |
| 6686 | **RHD4-02-002-C052-(IRR)-Wash out Valves** | 2026-10-21 → 2027-04-01 (+162d) | 2026-10-25 → 2027-04-05 (+162d) |  |  |
| RHD4CZ6C052IRR3102 | Installation for Wash out Valve for Irrigation Network - (RD-C-5 /2)-Z6-C052-IRR | 2026-10-21 → 2027-04-01 (+162d) | 2026-10-22 → 2027-04-03 (+163d) |  |  |
| RHD4CZ6C052IRR3202 | Stem and Service box for Wash out Valve for Irrigation Network - (RD-C-5 /2)-Z6-C052-IRR | 2026-10-24 → 2027-04-04 (+162d) | 2026-10-25 → 2027-04-05 (+162d) |  |  |
| 4980 | **RHD4-02-002-C052-(IRR)-Gate Valves (Direct Buried)** | 2026-10-22 → 2027-04-03 (+163d) | 2026-11-03 → 2027-04-14 (+162d) |  |  |
| RHD4CZ6C052IRR3100 | Installation for Direct Buried Gate Valves - (RD-C-5 /2)-Z6-C052-IRR | 2026-10-22 → 2027-04-03 (+163d) | 2026-10-24 → 2027-04-04 (+162d) |  |  |
| RHD4CZ6C052IRR3200 | Stem and Service box for Direct Buried Gate Valves - (RD-C-5 /2)-Z6-C052-IRR | 2026-11-02 → 2027-04-13 (+162d) | 2026-11-03 → 2027-04-14 (+162d) |  |  |
| 5005 | **RHD4-02-002-Z6-C052-Medium Voltage Network - MV** | 2026-09-08 → 2026-08-04 (-35d) | 2026-12-17 → 2027-06-16 (+181d) |  |  |
| 5006 | **RHD4-02-002-C052-(MV)-Medium Voltage cable trench** | 2026-11-07 → 2027-05-02 (+176d) | 2026-11-17 → 2027-05-12 (+176d) |  |  |
| RHD4CZ6C052MV1100 | Excavation for Medium Voltage Trench - (RD-C-5 /2)-Z6-C052-MV | 2026-11-07 → 2027-05-02 (+176d) | 2026-11-11 → 2027-05-06 (+176d) |  |  |
| RHD4CZ6C052MV1200 | Trench Backfilling for Medium Voltage Network - (RD-C-5 /2)-Z6-C052-MV | 2026-11-12 → 2027-05-08 (+177d) | 2026-11-17 → 2027-05-12 (+176d) |  |  |
| 5007 | **RHD4-02-002-C052-(MV)-Medium Voltage duct banks** | 2026-09-08 → 2026-08-04 (-35d) | 2026-09-16 → 2027-02-27 (+164d) |  |  |
| RHD4CZ6C052MV2100 | Excavation of Duct Banks for Medium Voltage Network - (RD-C-5 /2)-Z6-C052-MV | 2026-09-08 → 2026-08-04 A (-35d) | 2026-09-09 → 2027-02-18 (+162d) | 0% → 80% | resources Unskilled Labor [13.94 h]; Equipment Opreator [27.99 h]; Excavator-Poclain [13.94 h]; Dump Truck [13.94 h]; Duct bank for MV cables UPVC (8xø150mm) [1.93 m] → Unskilled Labor [13.94 h]; Equipment Opreator [28 h]; Excavator-Poclain [13.94 h]; Dump Truck [13.94 h]; Duct bank for MV cables UPVC (8xø150mm) [1.93 m] |
| RHD4CZ6C052MV2200 | Installation of Duct Banks for Medium Voltage Network - (RD-C-5 /2)-Z6-C052-MV | 2026-09-10 → 2026-08-06 A (-35d) | 2026-09-12 → 2027-02-21 (+162d) | 0% → 80% |  |
| RHD4CZ6C052MV2300 | Pouring of Duct Banks for Medium Voltage Network - (RD-C-5 /2)-Z6-C052-MV | 2026-09-13 → 2026-08-09 A (-35d) | 2026-09-14 → 2027-02-24 (+163d) | 0% → 80% | resources Unskilled Labor [13.94 h]; Equipment Opreator [27.99 h]; Excavator-Poclain [13.94 h]; Dump Truck [13.94 h]; Duct bank for MV cables UPVC (8xø150mm) [12.52 m] → Unskilled Labor [13.94 h]; Equipment Opreator [28 h]; Excavator-Poclain [13.94 h]; Dump Truck [13.94 h]; Duct bank for MV cables UPVC (8xø150mm) [12.52 m] |
| RHD4CZ6C052MV2400 | Backfilling of Duct Banks for Medium Voltage Network - (RD-C-5 /2)-Z6-C052-MV | 2026-09-15 → 2026-08-11 A (-35d) | 2026-09-16 → 2027-02-27 (+164d) | 0% → 80% |  |

| ID | Task | Start | Finish | Complete | Other |
| --- | --- | --- | --- | --- | --- |
| 5008 | **RHD4-02-002-C052-(MV)-Medium Voltage cables 3Cx 500 mm²** | 2026-11-12 → 2027-05-08 (+177d) | 2026-12-17 → 2027-06-16 (+181d) |  |  |
| RHD4CZ6C052MV3100 | Installation of Medium Voltage Cables 3Cx 500 mm² - (RD-C-5 /2)-Z6-C052-MV | 2026-11-12 → 2027-05-08 (+177d) | 2026-12-05 → 2027-06-03 (+180d) |  |  |
| RHD4CZ6C052MV3200 | Joints Installation of Medium Voltage Cables 3Cx 500 mm² - (RD-C-5 /2)-Z6-C052-MV | 2026-12-06 → 2027-06-05 (+181d) | 2026-12-08 → 2027-06-07 (+181d) |  |  |
| RHD4CZ6C052MV3300 | Testing of Medium Voltage Cables 3Cx 500 mm² - (RD-C-5 /2)-Z6-C052-MV | 2026-12-09 → 2027-06-08 (+181d) | 2026-12-15 → 2027-06-14 (+181d) |  |  |
| RHD4CZ6C052MV3400 | Termination of Medium Voltage Cables 3Cx 500 mm² - (RD-C-5 /2)-Z6-C052-MV | 2026-12-16 → 2027-06-15 (+181d) | 2026-12-17 → 2027-06-16 (+181d) |  |  |
| 5009 | **RHD4-02-002-C052-(MV)-Medium Voltage cables 3Cx 50 mm²** | 2026-12-16 → 2027-06-15 (+181d) | 2026-12-17 → 2027-06-16 (+181d) |  |  |
| RHD4CZ6C052MV3401 | Termination of Medium Voltage Cables 3Cx 50 mm² - (RD-C-5 /2)-Z6-C052-MV | 2026-12-16 → 2027-06-15 (+181d) | 2026-12-17 → 2027-06-16 (+181d) |  |  |
| 5010 | **RHD4-02-002-C052-(MV)-Normally open Point (Outdoor Type)** | 2026-12-03 → 2027-06-02 (+181d) | 2026-12-07 → 2027-06-06 (+181d) |  |  |
| RHD4CZ6C052MV4100 | Installation for Normally open Point - (RD-C-5 /2)-Z6-C052-MV | 2026-12-03 → 2027-06-02 (+181d) | 2026-12-05 → 2027-06-03 (+180d) |  |  |
| RHD4CZ6C052MV4200 | Termination for Normally open Point - (RD-C-5 /2)-Z6-C052-MV | 2026-12-06 → 2027-06-05 (+181d) | 2026-12-07 → 2027-06-06 (+181d) |  |  |
| 5012 | **RHD4-02-002-Z6-C052-Low Voltage Network - LV** | 2026-09-10 → 2026-08-04 (-37d) | 2026-11-09 → 2027-04-20 (+162d) |  |  |
| 5013 | **RHD4-02-002-C052-(LV)-Low Voltage duct banks** | 2026-09-10 → 2026-08-04 (-37d) | 2026-09-19 → 2026-08-12 (-38d) |  |  |
| RHD4CZ6C052LV2100 | Excavation of Duct Banks for Low Voltage Network - (RD-C-5 /2)-Z6-C052-LV | 2026-09-10 → 2026-08-04 A (-37d) | 2026-09-12 → 2026-08-05 A (-38d) | 0% → 100% |  |
| RHD4CZ6C052LV2200 | Installation of Duct Banks for Low Voltage Network - (RD-C-5 /2)-Z6-C052-LV | 2026-09-13 → 2026-08-06 A (-38d) | 2026-09-14 → 2026-08-08 A (-37d) | 0% → 100% |  |
| RHD4CZ6C052LV2300 | Pouring of Duct Banks for Low Voltage Network - (RD-C-5 /2)-Z6-C052-LV | 2026-09-15 → 2026-08-09 A (-37d) | 2026-09-16 → 2026-08-10 A (-37d) | 0% → 100% |  |
| RHD4CZ6C052LV2400 | Backfilling of Duct Banks for Low Voltage Network - (RD-C-5 /2)-Z6-C052-LV | 2026-09-17 → 2026-08-11 A (-37d) | 2026-09-19 → 2026-08-12 A (-38d) | 0% → 100% |  |
| 5014 | **RHD4-02-002-C052-(LV)-Low Voltage Drawpit** | 2026-10-26 → 2027-04-06 (+162d) | 2026-10-29 → 2027-04-10 (+163d) |  |  |
| RHD4CZ6C052LV5100 | Excavation of Drawpit size 900x900x1000mm for Low Voltage Network - (RD-C-5 /2)-Z6-C052-LV | 2026-10-26 → 2027-04-06 (+162d) | 2026-10-27 → 2027-04-07 (+162d) |  |  |
| RHD4CZ6C052LV5200 | Installation of Drawpit size 900x900x1000mm for Low Voltage Network - (RD-C-5 /2)-Z6-C052-LV | 2026-10-28 → 2027-04-08 (+162d) | 2026-10-29 → 2027-04-10 (+163d) |  |  |
| 5015 | **RHD4-02-002-C052-(LV)-Low Voltage cables** | 2026-10-31 → 2027-04-11 (+162d) | 2026-11-09 → 2027-04-20 (+162d) |  |  |
| RHD4CZ6C052LV3100 | Excavation for Low Voltage Cables for Low Voltage Network - (RD-C-5 /2)-Z6-C052-LV | 2026-10-31 → 2027-04-11 (+162d) | 2026-11-02 → 2027-04-13 (+162d) |  |  |
| RHD4CZ6C052LV3200 | Cable Laying of Low Voltage Cables for Low Voltage Network - (RD-C-5 /2)-Z6-C052-LV | 2026-11-03 → 2027-04-14 (+162d) | 2026-11-04 → 2027-04-15 (+162d) |  | resources Skilled labor [19.17 h]; Unskilled Labor [76.78 h]; Electrician [38.33 h]; Equipment Opreator [57.61 h]; Boom Truck [19.17 h]; Cable Laying Machine [38.33 h]; Cable, Copper 4x70mm2/ CU/XLPE/PVC [240.62 m]; Cable, Copper 4x50mm2/ CU/XLPE/PVC +1x25mm2 CU/PVC [76.54 m] → Skilled labor [19.2 h]; Unskilled Labor [76.8 h]; Electrician [38.33 h]; Equipment Opreator [57.6 h]; Boom Truck [19.2 h]; Cable Laying Machine [38.33 h]; Cable, Copper 4x70mm2/ CU/XLPE/PVC [240.62 m]; Cable, Copper 4x50mm2/ CU/XLPE/PVC +1x25mm2 CU/PVC [76.54 m] |
| RHD4CZ6C052LV3300 | Warning tape and Backfill for Low Voltage Cables for Low Voltage Network - (RD-C-5 /2)-Z6-C052-LV | 2026-11-05 → 2027-04-17 (+163d) | 2026-11-07 → 2027-04-18 (+162d) |  | resources Skilled labor [19.17 h]; Unskilled Labor [76.78 h]; Electrician [38.33 h]; Equipment Opreator [19.17 h]; Boom Truck [19.17 h]; Cable, Copper 4x70mm2/ CU/XLPE/PVC [60.16 m]; Cable, Copper 4x50mm2/ CU/XLPE/PVC +1x25mm2 CU/PVC [19.14 m] → Skilled labor [19.2 h]; Unskilled Labor [76.8 h]; Electrician [38.33 h]; Equipment Opreator [19.2 h]; Boom Truck [19.2 h]; Cable, Copper 4x70mm2/ CU/XLPE/PVC [60.16 m]; Cable, Copper 4x50mm2/ CU/XLPE/PVC +1x25mm2 CU/PVC [19.14 m] |
| RHD4CZ6C052LV3400 | Testing of Low Voltage Cables for Low Voltage Network - (RD-C-5 /2)-Z6-C052-LV | 2026-11-08 → 2027-04-19 (+162d) | 2026-11-09 → 2027-04-20 (+162d) |  |  |
| 5018 | **RHD4-02-002-Z6-C052-Street Lighting Network - SL** | 2026-11-04 → 2026-08-04 (-92d) | 2026-11-30 → 2027-05-04 (+155d) |  |  |
| 5019 | **RHD4-02-002-C052-(SL)-Street Lighting duct banks** | 2026-11-04 → 2026-08-04 (-92d) | 2026-11-12 → 2026-08-12 (-92d) |  |  |
| RHD4CZ6C052SL2100 | Excavation of Duct Banks for Street Lighting Network - (RD-C-5 /2)-Z6-C052-SL | 2026-11-04 → 2026-08-04 A (-92d) | 2026-11-05 → 2026-08-05 A (-92d) | 0% → 100% |  |
| RHD4CZ6C052SL2200 | Installation of Duct Banks for Street Lighting Network - (RD-C-5 /2)-Z6-C052-SL | 2026-11-07 → 2026-08-06 A (-93d) | 2026-11-08 → 2026-08-08 A (-92d) | 0% → 100% |  |
| RHD4CZ6C052SL2300 | Pouring of Duct Banks for Street Lighting Network - (RD-C-5 /2)-Z6-C052-SL | 2026-11-09 → 2026-08-09 A (-92d) | 2026-11-10 → 2026-08-10 A (-92d) | 0% → 100% |  |
| RHD4CZ6C052SL2400 | Backfilling of Duct Banks for Street Lighting Network - (RD-C-5 /2)-Z6-C052-SL | 2026-11-11 → 2026-08-11 A (-92d) | 2026-11-12 → 2026-08-12 A (-92d) | 0% → 100% |  |
| 5020 | **RHD4-02-002-C052-(SL)-Street Lighting Drawpit** | 2026-11-11 → 2027-04-15 (+155d) | 2026-11-15 → 2027-04-19 (+155d) |  |  |
| RHD4CZ6C052SL5100 | Excavation of Drawpit size 600x600x900mm for Street Lighting Network - (RD-C-5 /2)-Z6-C052-SL | 2026-11-11 → 2027-04-15 (+155d) | 2026-11-12 → 2027-04-17 (+156d) |  |  |
| RHD4CZ6C052SL5200 | Installation of Drawpit size 600x600x900mm for Street Lighting Network - (RD-C-5 /2)-Z6-C052-SL | 2026-11-14 → 2027-04-18 (+155d) | 2026-11-15 → 2027-04-19 (+155d) |  |  |
| 5021 | **RHD4-02-002-C052-(SL)-Street Lighting cables** | 2026-11-16 → 2027-04-20 (+155d) | 2026-11-25 → 2027-04-29 (+155d) |  |  |
| RHD4CZ6C052SL3100 | Excavation for Street Lighting Cables for Street Lighting Network - (RD-C-5 /2)-Z6-C052-SL | 2026-11-16 → 2027-04-20 (+155d) | 2026-11-18 → 2027-04-22 (+155d) |  |  |
| RHD4CZ6C052SL3200 | Cable Laying of Street Lighting Cables for Street Lighting Network - (RD-C-5 /2)-Z6-C052-SL | 2026-11-19 → 2027-04-24 (+156d) | 2026-11-21 → 2027-04-25 (+155d) |  |  |
| RHD4CZ6C052SL3300 | Warning tape and Backfill for Street Lighting Cables for Street Lighting Network - (RD-C-5 /2)-Z6-C052-SL | 2026-11-22 → 2027-04-26 (+155d) | 2026-11-23 → 2027-04-27 (+155d) |  |  |
| RHD4CZ6C052SL3400 | Testing of Street Lighting Cables for Street Lighting Network - (RD-C-5 /2)-Z6-C052-SL | 2026-11-24 → 2027-04-28 (+155d) | 2026-11-25 → 2027-04-29 (+155d) |  |  |
| 5022 | **RHD4-02-002-C052-(SL)-Street Lighting Poles** | 2026-11-14 → 2027-04-18 (+155d) | 2026-11-30 → 2027-05-04 (+155d) |  |  |
| RHD4CZ6C052SL1100 | Excavation for RC Base for Lighting Poles for Street Lighting Network - (RD-C-5 /2)-Z6-C052-SL | 2026-11-14 → 2027-04-18 (+155d) | 2026-11-15 → 2027-04-19 (+155d) |  | resources Skilled labor [7.95 h]; Unskilled Labor [7.95 h]; Equipment Opreator [16.01 h]; Excavator-Poclain [7.95 h]; Dump Truck [7.95 h]; Lighting polesdouble arms, height of ( 12 ) meters [1.1 Unit] → Skilled labor [7.95 h]; Unskilled Labor [7.95 h]; Equipment Opreator [16 h]; Excavator-Poclain [7.95 h]; Dump Truck [7.95 h]; Lighting polesdouble arms, height of ( 12 ) meters [1.1 Unit] |
| RHD4CZ6C052SL1200 | Installation for RC Base for Lighting Poles for Street Lighting Network - (RD-C-5 /2)-Z6-C052-SL | 2026-11-16 → 2027-04-20 (+155d) | 2026-11-17 → 2027-04-21 (+155d) |  | resources Skilled labor [7.95 h]; Unskilled Labor [7.95 h]; Equipment Opreator [16.01 h]; Excavator-Poclain [7.95 h]; Dump Truck [7.95 h]; Lighting polesdouble arms, height of ( 12 ) meters [2.75 Unit] → Skilled labor [7.95 h]; Unskilled Labor [7.95 h]; Equipment Opreator [16 h]; Excavator-Poclain [7.95 h]; Dump Truck [7.95 h]; Lighting polesdouble arms, height of ( 12 ) meters [2.75 Unit] |
| RHD4CZ6C052SL1300 | Backfill for RC Base for Lighting Poles for Street Lighting Network - (RD-C-5 /2)-Z6-C052-SL | 2026-11-18 → 2027-04-22 (+155d) | 2026-11-19 → 2027-04-24 (+156d) |  | resources Skilled labor [7.95 h]; Unskilled Labor [7.95 h]; Equipment Opreator [16.01 h]; Excavator-Poclain [7.95 h]; Dump Truck [7.95 h]; Lighting polesdouble arms, height of ( 12 ) meters [0.55 Unit] → Skilled labor [7.95 h]; Unskilled Labor [7.95 h]; Equipment Opreator [16 h]; Excavator-Poclain [7.95 h]; Dump Truck [7.95 h]; Lighting polesdouble arms, height of ( 12 ) meters [0.55 Unit] |
| RHD4CZ6C052SL1400 | Installation for Lighting Poles for Street Lighting Network - (RD-C-5 /2)-Z6-C052-SL | 2026-11-26 → 2027-05-01 (+156d) | 2026-11-28 → 2027-05-02 (+155d) |  | resources Skilled labor [11.98 h]; Unskilled Labor [11.98 h]; Electrician [11.98 h]; Equipment Opreator [11.98 h]; Boom Truck [11.98 h]; Lighting polesdouble arms, height of ( 12 ) meters [6.6 Unit] → Skilled labor [12 h]; Unskilled Labor [12 h]; Electrician [12 h]; Equipment Opreator [12 h]; Boom Truck [12 h]; Lighting polesdouble arms, height of ( 12 ) meters [6.6 Unit] |
| RHD4CZ6C052SL1500 | Luminaire Installation for Lighting Poles for Street Lighting Network - (RD-C-5 /2)-Z6-C052-SL | 2026-11-29 → 2027-05-03 (+155d) | 2026-11-30 → 2027-05-04 (+155d) |  | resources Unskilled Labor [31.91 h]; Electrician [16.01 h]; Equipment Opreator [6.43 h]; Boom Truck [6.43 h]; Street Lighting( LED) Luminaire of Output ?18553 lumen [22 Unit] → Unskilled Labor [31.91 h]; Electrician [16 h]; Equipment Opreator [6.4 h]; Boom Truck [6.4 h]; Street Lighting( LED) Luminaire of Output ?18553 lumen [22 Unit] |
| 5024 | **RHD4-02-002-C052-(SL)-Street Lighting Earthing System** | 2026-11-29 → 2027-05-03 (+155d) | 2026-11-30 → 2027-05-04 (+155d) |  |  |
| RHD4CZ6C052SL6100 | Installation of Earthing for Lighting Poles and Fedder Pillers for Street Lighting Network - (RD-C-5 /2)-Z6-C052-SL | 2026-11-29 → 2027-05-03 (+155d) | 2026-11-30 → 2027-05-04 (+155d) |  | resources Skilled labor [0.76 h]; Unskilled Labor [0.76 h]; Equipment Opreator [1.42 h]; Excavator-Poclain [0.76 h]; Dump Truck [0.76 h]; Street Lighting Feeder pillars - ER [1 Unit] → Skilled labor [0.8 h]; Unskilled Labor [0.8 h]; Equipment Opreator [1.42 h]; Excavator-Poclain [0.8 h]; Dump Truck [0.8 h]; Street Lighting Feeder pillars - ER [1 Unit] |
| 5030 | **RHD4-02-002-Z6-C052-Telecommunications Network - TC** | 2026-07-25 → 2026-08-04 (+10d) | 2026-12-23 → 2027-06-01 (+160d) |  |  |
| 5031 | **RHD4-02-002-C052-(TC)-Telecommunications Ducts** | 2026-12-01 → 2027-05-05 (+155d) | 2026-12-23 → 2027-06-01 (+160d) |  |  |
| RHD4CZ6C052TC2100 | Excavation of HDPE Ducts for Telecom Network - (RD-C-5 /2)-Z6-C052-TC | 2026-12-01 → 2027-05-05 (+155d) | 2026-12-07 → 2027-05-11 (+155d) |  |  |
| RHD4CZ6C052TC2200 | Installation of HDPE Ducts for Telecom Network - (RD-C-5 /2)-Z6-C052-TC | 2026-12-08 → 2027-05-12 (+155d) | 2026-12-16 → 2027-05-25 (+160d) |  |  |
| RHD4CZ6C052TC2400 | Backfilling of HDPE Ducts for Telecom Network - (RD-C-5 /2)-Z6-C052-TC | 2026-12-17 → 2027-05-26 (+160d) | 2026-12-23 → 2027-06-01 (+160d) |  | resources Skilled labor [56.09 h]; Unskilled Labor [56.09 h]; Equipment Opreator [22.43 h]; Excavator-Poclain [22.43 h]; (6*50mm) HDPE ducts -TC [65.83 m]; (6*50mm+2*32mm) HDPE ducts -TC [26.66 m]; (6*50mm+4*32mm) HDPE ducts -TC [13.77 m]; (2*32mm) HDPE ducts -TC [9.69 m] → Skilled labor [56.09 h]; Unskilled Labor [56.09 h]; Equipment Opreator [22.4 h]; Excavator-Poclain [22.4 h]; (6*50mm) HDPE ducts -TC [65.83 m]; (6*50mm+2*32mm) HDPE ducts -TC [26.66 m]; (6*50mm+4*32mm) HDPE ducts -TC [13.77 m]; (2*32mm) HDPE ducts -TC [9.69 m] |
| 5032 | **RHD4-02-002-C052-(TC)-Telecommunications Manholes** | 2026-12-08 → 2027-05-12 (+155d) | 2026-12-16 → 2027-05-25 (+160d) |  |  |
| RHD4CZ6C052TC5100 | Excavation for Manholes for Telecom Network - (RD-C-5 /2)-Z6-C052-TC | 2026-12-08 → 2027-05-12 (+155d) | 2026-12-12 → 2027-05-20 (+159d) |  |  |
| RHD4CZ6C052TC5200 | Installation of Manholes for Telecom Network - (RD-C-5 /2)-Z6-C052-TC | 2026-12-13 → 2027-05-22 (+160d) | 2026-12-16 → 2027-05-25 (+160d) |  |  |
| 5033 | **RHD4-02-002-C052-(TC)-Telecomminications Road Crossings** | 2026-07-25 → 2026-08-04 (+10d) | 2026-08-08 → 2027-02-04 (+180d) |  |  |
| RHD4CZ6C052TC3100 | Excavation for Road Crossings for Telecom Network - (RD-C-5 /2)-Z6-C052-TC | 2026-07-25 → 2026-08-04 A (+10d) | 2026-07-26 → 2027-01-30 (+188d) | 0% → 50% |  |
| RHD4CZ6C052TC3200 | Installation of Road Crossings for Telecom Network - (RD-C-5 /2)-Z6-C052-TC | 2026-07-30 → 2026-08-06 A (+7d) | 2026-08-02 → 2027-02-01 (+183d) | 0% → 50% |  |
| RHD4CZ6C052TC3300 | Pouring of Road Crossings for Telecom Network - (RD-C-5 /2)-Z6-C052-TC | 2026-08-03 → 2026-08-09 A (+6d) | 2026-08-05 → 2027-02-03 (+182d) | 0% → 50% |  |
| RHD4CZ6C052TC3400 | Backfilling of Road Crossings for Telecom Network - (RD-C-5 /2)-Z6-C052-TC | 2026-08-06 → 2026-08-11 A (+5d) | 2026-08-08 → 2027-02-04 (+180d) | 0% → 50% |  |
| 5034 | **RHD4-02-002-Z6-C052-Information and Communication Technologies - ICT** | 2026-07-27 → 2026-08-04 (+8d) | 2027-01-17 → 2027-06-26 (+160d) |  |  |
| 5035 | **RHD4-02-002-C052-(ICT)-Information and Communication Technologies Ducts** | 2026-12-24 → 2027-06-02 (+160d) | 2027-01-17 → 2027-06-26 (+160d) |  |  |
| RHD4CZ6C052ICT2100 | Excavation of HDPE Ducts for ICT Network - (RD-C-5 /2)-Z6-C052-ICT | 2026-12-24 → 2027-06-02 (+160d) | 2026-12-30 → 2027-06-08 (+160d) |  |  |
| RHD4CZ6C052ICT2200 | Installation of HDPE Ducts for ICT Network - (RD-C-5 /2)-Z6-C052-ICT | 2026-12-31 → 2027-06-09 (+160d) | 2027-01-10 → 2027-06-19 (+160d) |  |  |
| RHD4CZ6C052ICT2400 | Backfilling of HDPE Ducts for ICT Network - (RD-C-5 /2)-Z6-C052-ICT | 2027-01-11 → 2027-06-20 (+160d) | 2027-01-17 → 2027-06-26 (+160d) |  | resources Skilled labor [62.07 h]; Unskilled Labor [62.07 h]; Equipment Opreator [24.83 h]; Excavator-Poclain [24.83 h]; (2*50mm) HDPE ducts -ICT [64.95 m]; (2*50mm+2*32mm) HDPE ducts -ICT [33.23 m]; (2*50mm+4*32mm) HDPE ducts -ICT [18.68 m]; (2*32mm) HDPE ducts -ICT [11.37 m] → Skilled labor [62.07 h]; Unskilled Labor [62.07 h]; Equipment Opreator [24.8 h]; Excavator-Poclain [24.8 h]; (2*50mm) HDPE ducts -ICT [64.95 m]; (2*50mm+2*32mm) HDPE ducts -ICT [33.23 m]; (2*50mm+4*32mm) HDPE ducts -ICT [18.68 m]; (2*32mm) HDPE ducts -ICT [11.37 m] |
| 5036 | **RHD4-02-002-C052-(ICT)-Information and Communication Technologies Manholes** | 2026-12-31 → 2027-06-09 (+160d) | 2027-01-06 → 2027-06-15 (+160d) |  |  |
| RHD4CZ6C052ICT5100 | Excavation for Manholes for ICT Network - (RD-C-5 /2)-Z6-C052-ICT | 2026-12-31 → 2027-06-09 (+160d) | 2027-01-03 → 2027-06-12 (+160d) |  |  |
| RHD4CZ6C052ICT5200 | Installation of Manholes for ICT Network - (RD-C-5 /2)-Z6-C052-ICT | 2027-01-04 → 2027-06-13 (+160d) | 2027-01-06 → 2027-06-15 (+160d) |  |  |
| 5037 | **RHD4-02-002-C052-(ICT)-Information and Communication Technologies Road Crossings** | 2026-07-27 → 2026-08-04 (+8d) | 2026-08-25 → 2027-03-01 (+188d) |  |  |
| RHD4CZ6C052ICT3100 | Excavation for Road Crossings for ICT Network - (RD-C-5 /2)-Z6-C052-ICT | 2026-07-27 → 2026-08-04 A (+8d) | 2026-07-28 → 2027-02-01 (+188d) | 0% → 53% |  |
| RHD4CZ6C052ICT3200 | Installation of Road Crossings for ICT Network - (RD-C-5 /2)-Z6-C052-ICT | 2026-08-17 → 2026-08-06 A (-11d) | 2026-08-19 → 2027-02-23 (+188d) | 0% → 53% |  |

| ID | Task | Start | Finish | Duration | Complete | Other |
| --- | --- | --- | --- | --- | --- | --- |
| RHD4CZ6C052ICT3300 | Pouring of Road Crossings for ICT Network - (RD-C-5 /2)-Z6-C052-ICT | 2026-08-20 → 2026-08-09 A (-11d) | 2026-08-23 → 2027-02-27 (+188d) |  | 0% → 53% |  |
| RHD4CZ6C052ICT3400 | Backfilling of Road Crossings for ICT Network - (RD-C-5 /2)-Z6-C052-ICT | 2026-08-24 → 2026-08-11 A (-13d) | 2026-08-25 → 2027-03-01 (+188d) |  | 0% → 53% |  |
| 5055 | **RHD4-02-002-Z6-A02** | 2026-07-25 → 2026-04-22 (-94d) | 2027-01-25 → 2027-07-19 (+175d) |  |  |  |
| 5234 | **RHD4-02-002-Z6-A02-Road Works - RD** | 2026-08-10 → 2026-04-22 (-110d) | 2027-01-25 → 2027-07-19 (+175d) |  |  |  |
| 5235 | **RHD4-02-002-A02-(RD)-Subgrade** | 2026-08-10 → 2026-04-22 (-110d) | 2026-08-22 → 2026-05-20 (-94d) |  |  |  |
| RHD4CZ6A02RD1100 | Supply, lay and compaction subgrade compacted thickness 300 mm for Roads - (RD-A-2)-Z6-A02-RD | 2026-08-10 → 2026-04-22 A (-110d) | 2026-08-22 → 2026-05-20 A (-94d) |  | 0% → 100% |  |
| 5236 | **RHD4-02-002-A02-(RD)-Aggregate Base Course** | 2026-08-23 → 2027-02-01 (+162d) | 2026-08-24 → 2027-02-02 (+162d) |  |  |  |
| RHD4CZ6A02RD2100 | Supply, lay and compaction Aggregate base course compacted thickness 300 mmfor Roads - (RD-A-2)-Z6-A02-RD | 2026-08-23 → 2027-02-01 (+162d) | 2026-08-24 → 2027-02-02 (+162d) |  |  | resources Skilled labor [9.15 h]; Unskilled Labor [18.19 h]; Equipment Opreator [115.22 h]; Water Truck [5.99 h]; Roller compactor [18.19 h]; Grader [18.19 h]; Dump Truck [72.75 h]; Aggregate Base Courses [742.19 m3] → Skilled labor [9.15 h]; Unskilled Labor [18.19 h]; Equipment Opreator [115.2 h]; Water Truck [5.99 h]; Roller compactor [18.19 h]; Grader [18.19 h]; Dump Truck [72.75 h]; Aggregate Base Courses [742.19 m3] |
| 5237 | **RHD4-02-002-A02-(RD)-Bituminous base course Two Layers, including (MC1)&(RC2)** | 2026-09-12 → 2027-03-08 (+177d) | 2027-01-12 → 2027-07-03 (+172d) |  |  |  |
| RHD4CZ6A02RD3100 | Supply, lay and Asphaltic base course including Prime Coat (MC1) for 1st Layer - (RD-A-2)-Z6-A02-RD | 2026-09-12 → 2027-03-08 (+177d) | 2026-09-13 → 2027-03-13 (+181d) |  |  | resources Skilled labor [9.58 h]; Unskilled Labor [57.83 h]; Equipment Opreator [144.51 h]; Bobcat [9.58 h]; Roller compactor [9.58 h]; Asphalt Paver [9.58 h]; Rubber Compactor [19.28 h]; MC1/RC2 Sprinkler [9.58 h]; Dump Truck [86.69 h]; Bituminous base course (Grading I - Class A), including Prime coat (MC1) & tack coate (RC2) [352.5 m3] → Skilled labor [9.6 h]; Unskilled Labor [57.83 h]; Equipment Opreator [144.51 h]; Bobcat [9.6 h]; Roller compactor [9.6 h]; Asphalt Paver [9.6 h]; Rubber Compactor [19.28 h]; MC1/RC2 Sprinkler [9.6 h]; Dump Truck [86.69 h]; Bituminous base course (Grading I - Class A), including Prime coat (MC1) & tack coate (RC2) [352.5 m3] |
| RHD4CZ6A02RD3200 | Supply, lay and Asphaltic base course including Tack Coat (RC2) for 2nd Layer - (RD-A-2)-Z6-A02-RD | 2027-01-11 → 2027-07-01 (+171d) | 2027-01-12 → 2027-07-03 (+172d) |  |  | resources Skilled labor [9.58 h]; Unskilled Labor [57.83 h]; Equipment Opreator [144.51 h]; Bobcat [9.58 h]; Roller compactor [9.58 h]; Asphalt Paver [9.58 h]; Rubber Compactor [19.28 h]; MC1/RC2 Sprinkler [9.58 h]; Dump Truck [86.69 h]; Bituminous base course (Grading I - Class A), including Prime coat (MC1) & tack coate (RC2) [352.5 m3] → Skilled labor [9.6 h]; Unskilled Labor [57.83 h]; Equipment Opreator [144.51 h]; Bobcat [9.6 h]; Roller compactor [9.6 h]; Asphalt Paver [9.6 h]; Rubber Compactor [19.28 h]; MC1/RC2 Sprinkler [9.6 h]; Dump Truck [86.69 h]; Bituminous base course (Grading I - Class A), including Prime coat (MC1) & tack coate (RC2) [352.5 m3] |
| 5239 | **RHD4-02-002-A02-(RD)-Precast Concrete Curb** | 2027-01-13 → 2027-07-04 (+172d) | 2027-01-18 → 2027-07-08 (+171d) |  |  |  |
| RHD4CZ6A02RD5100 | Supply and installation Precast Concrete Kerb for Roads - (RD-A-2)-Z6-A02-RD | 2027-01-13 → 2027-07-04 (+172d) | 2027-01-18 → 2027-07-08 (+171d) |  |  |  |
| 5242 | **RHD4-02-002-A02-(RD)-Traffic Signage** | 2027-01-19 → 2027-07-10 (+172d) | 2027-01-21 → 2027-07-15 (+175d) |  |  |  |
| RHD4CZ6A02RD8100 | Installation of Traffic Signage for Road Network - (RD-A-2)-Z6-A02-RD | 2027-01-19 → 2027-07-10 (+172d) | 2027-01-21 → 2027-07-15 (+175d) | 3d → 6d |  |  |
| 5238 | **RHD4-02-002-A02-(RD)-Bituminous concrete wearing course including tack coat (RC2)** | 2027-01-19 → 2027-07-10 (+172d) | 2027-01-20 → 2027-07-11 (+172d) |  |  |  |
| RHD4CZ6A02RD4100 | Supply, lay and compaction Asphaltic wearing course including tack Coat (RC2)for Road Network - (RD-A-2)-Z6-A02-RD | 2027-01-19 → 2027-07-10 (+172d) | 2027-01-20 → 2027-07-11 (+172d) |  |  |  |
| 5241 | **RHD4-02-002-A02-(RD)-Pavement Marking** | 2027-01-23 → 2027-07-17 (+175d) | 2027-01-25 → 2027-07-19 (+175d) |  |  |  |
| RHD4CZ6A02RD7100 | Pavement Markings for Road Network - (RD-A-2)-Z6-A02-RD | 2027-01-23 → 2027-07-17 (+175d) | 2027-01-25 → 2027-07-19 (+175d) |  |  |  |
| 5059 | **RHD4-02-002-Z6-A02-Storm Network - ST** |  | 2026-08-11 → 2027-02-11 (+184d) |  |  |  |
| 5076 | **RHD4-02-002-A02-(ST)-MH Works - 1200 mm diameter** |  | 2026-08-04 → 2027-02-02 (+182d) |  |  |  |
| RHD4CZ6A02ST3100 | Excavation and PC Blinding works for MH 1200 mm - (RD-A-2)-Z6-A02-ST | 2026-07-25 A | 2026-07-26 → 2026-08-05 A (+10d) |  | 0% → 100% |  |
| RHD4CZ6A02ST3200 | Installation of Base for MH 1200 mm - (RD-A-2)-Z6-A02-ST | 2026-07-27 A | 2026-07-28 → 2026-08-05 A (+8d) |  | 0% → 100% |  |
| RHD4CZ6A02ST3300 | MH Ring and C.Slab works and Backfilling works for MH 1200 mm - (RD-A-2)-Z6-A02-ST | 2026-07-29 → 2026-10-20 A (+83d) | 2026-07-30 → 2026-10-21 A (+83d) |  | 0% → 100% |  |
| RHD4CZ6A02ST3400 | Steel Cover for MH 1200 mm - (RD-A-2)-Z6-A02-ST | 2026-08-01 → 2027-01-30 (+182d) | 2026-08-02 → 2027-01-31 (+182d) |  |  |  |
| RHD4CZ6A02ST3500 | Finishing, Benching, Testing works for MH 1200 mm - (RD-A-2)-Z6-A02-ST | 2026-08-03 → 2027-02-01 (+182d) | 2026-08-04 → 2027-02-02 (+182d) |  |  |  |
| 5061 | **RHD4-02-002-A02-(ST)-GRP Pipes - 500 mm diameter** |  | 2026-08-09 → 2027-01-31 (+175d) |  |  |  |
| RHD4CZ6A02ST1101 | Excavation works for GRP Pipe Line 500 mm - (RD-A-2)-Z6-A02-ST | 2026-07-29 A | 2026-07-30 → 2026-08-05 A (+6d) |  | 0% → 100% |  |
| RHD4CZ6A02ST1201 | Bedding works for GRP Pipe Line 500 mm - (RD-A-2)-Z6-A02-ST | 2026-08-01 A | 2026-08-02 → 2026-09-16 A (+45d) |  | 0% → 100% |  |
| RHD4CZ6A02ST1301 | Installing for GRP Pipe Line 500 mm - (RD-A-2)-Z6-A02-ST | 2026-08-03 A | 2026-08-04 → 2026-09-17 A (+44d) |  | 0% → 100% |  |
| RHD4CZ6A02ST1501 | Backfilling and warning tape works for GRP Pipe Line 500 mm - (RD-A-2)-Z6-A02-ST | 2026-08-08 A | 2026-08-09 → 2026-09-19 A (+41d) |  | 0% → 100% |  |
| RHD4CZ6A02ST1401 | Primary Test for GRP Pipe Line 500 mm - (RD-A-2)-Z6-A02-ST | 2026-08-05 → 2027-01-30 (+178d) | 2026-08-06 → 2027-01-31 (+178d) |  |  |  |
| 5060 | **RHD4-02-002-A02-(ST)-GRP Pipes - 400 mm diameter** |  | 2026-08-11 → 2027-01-31 (+173d) |  |  |  |
| RHD4CZ6A02ST1100 | Excavation works for GRP Pipe Line 400 mm - (RD-A-2)-Z6-A02-ST | 2026-08-01 A | 2026-08-02 → 2026-08-05 A (+3d) |  | 0% → 100% |  |
| RHD4CZ6A02ST1200 | Bedding works for GRP Pipe Line 400 mm - (RD-A-2)-Z6-A02-ST | 2026-08-03 A | 2026-08-04 → 2026-09-16 A (+43d) |  | 0% → 100% | resources Skilled labor [9.58 h]; Unskilled Labor [19.28 h]; Equipment Opreator [19.28 h]; Excavator-Poclain [9.58 h]; Dump Truck [9.58 h]; GRP (400mm Diameter) - ST - Depth less than 1.5 m [13.25 m] → Skilled labor [9.6 h]; Unskilled Labor [19.28 h]; Equipment Opreator [19.28 h]; Excavator-Poclain [9.6 h]; Dump Truck [9.6 h]; GRP (400mm Diameter) - ST - Depth less than 1.5 m [13.25 m] |
| RHD4CZ6A02ST1300 | Installing for GRP Pipe Line 400 mm - (RD-A-2)-Z6-A02-ST | 2026-08-05 A | 2026-08-06 → 2026-09-17 A (+42d) |  | 0% → 100% |  |
| RHD4CZ6A02ST1500 | Backfilling and warning tape works for GRP Pipe Line 400 mm - (RD-A-2)-Z6-A02-ST | 2026-08-10 A | 2026-08-11 → 2026-09-19 A (+39d) |  | 0% → 100% |  |
| RHD4CZ6A02ST1400 | Primary Test for GRP Pipe Line 400 mm - (RD-A-2)-Z6-A02-ST | 2026-08-08 → 2027-01-30 (+175d) | 2026-08-09 → 2027-01-31 (+175d) |  |  |  |
| 5074 | **RHD4-02-002-A02-(ST)-UPVC Pipes - 300 mm diameter** | 2026-07-29 → 2026-08-23 (+25d) | 2026-08-09 → 2027-02-11 (+186d) |  |  |  |
| RHD4CZ6A02ST2100 | Excavation works for UPVC Pipe Line 300 mm - (RD-A-2)-Z6-A02-ST | 2026-07-29 → 2026-08-23 A (+25d) | 2026-07-30 → 2027-01-31 (+185d) |  | 0% → 46% |  |
| RHD4CZ6A02ST2200 | Bedding works for UPVC Pipe Line 300 mm - (RD-A-2)-Z6-A02-ST | 2026-08-01 → 2026-08-25 A (+24d) | 2026-08-02 → 2027-02-02 (+184d) |  | 0% → 45% |  |
| RHD4CZ6A02ST2300 | Installing for UPVC Pipe Line 300 mm - (RD-A-2)-Z6-A02-ST | 2026-08-03 → 2026-08-27 A (+24d) | 2026-08-04 → 2027-02-07 (+187d) |  | 0% → 46% |  |
| RHD4CZ6A02ST2400 | Primary Test for UPVC Pipe Line 300 mm - (RD-A-2)-Z6-A02-ST | 2026-08-05 → 2027-02-08 (+187d) | 2026-08-06 → 2027-02-09 (+187d) |  |  |  |
| RHD4CZ6A02ST2500 | Backfilling and warning tape works for UPVC Pipe Line 300 mm - (RD-A-2)-Z6-A02-ST | 2026-08-08 → 2027-02-10 (+186d) | 2026-08-09 → 2027-02-11 (+186d) |  |  |  |
| 5082 | **RHD4-02-002-A02-(ST)-Concrete Encasement** | 2026-08-03 → 2027-02-06 (+187d) | 2026-08-04 → 2027-02-07 (+187d) |  |  |  |
| RHD4CZ6A02ST6100 | Pipe Encasement for Storm Pipelines - (RD-A-2)-Z6-A02-ST | 2026-08-03 → 2027-02-06 (+187d) | 2026-08-04 → 2027-02-07 (+187d) |  |  |  |
| 5083 | **RHD4-02-002-Z6-A02-Catch Basin - ST** | 2026-07-27 → 2026-08-04 (+8d) | 2026-08-06 → 2027-02-09 (+187d) |  |  |  |
| 5084 | **RHD4-02-002-A02-(ST)-Single Catch Basin Works** | 2026-07-27 → 2026-08-04 (+8d) | 2026-08-06 → 2027-02-09 (+187d) |  |  |  |
| RHD4CZ6A02ST7100 | Excavation works for Single Catch Basin - (RD-A-2)-Z6-A02-ST | 2026-07-27 → 2026-08-04 A (+8d) | 2026-07-28 → 2027-01-31 (+187d) |  | 0% → 20% |  |
| RHD4CZ6A02ST7200 | PC Blinding, Installation and Pipe connection for Single Catch Basin - (RD-A-2)-Z6-A02-ST | 2026-07-29 → 2026-08-06 A (+8d) | 2026-07-30 → 2027-02-02 (+187d) |  | 0% → 20% |  |
| RHD4CZ6A02ST7300 | Rings & C.Slab & Final Backfill for Single Catch Basin - (RD-A-2)-Z6-A02-ST | 2026-08-01 → 2026-10-27 A (+87d) | 2026-08-02 → 2027-02-04 (+186d) |  | 0% → 20% | resources Skilled labor [13.61 h]; Unskilled Labor [27.23 h]; Equipment Opreator [16.34 h]; Boom Truck [2.72 h]; Bobcat [13.61 h]; Single Catch basin - ST [3.5 nr] → Skilled labor [13.6 h]; Unskilled Labor [27.2 h]; Equipment Opreator [16.34 h]; Boom Truck [2.72 h]; Bobcat [13.6 h]; Single Catch basin - ST [3.5 nr] |
| RHD4CZ6A02ST7400 | Steel Cover for Single Catch Basin - (RD-A-2)-Z6-A02-ST | 2026-08-03 → 2027-02-06 (+187d) | 2026-08-04 → 2027-02-07 (+187d) |  |  |  |
| RHD4CZ6A02ST7500 | Finishing and Insulation works for Single Catch Basin - (RD-A-2)-Z6-A02-ST | 2026-08-05 → 2027-02-08 (+187d) | 2026-08-06 → 2027-02-09 (+187d) |  |  |  |
| 3973 | **RHD4-02-002-Z6-A02-Sewage Network - SW** |  | 2026-08-09 → 2027-02-07 (+182d) |  |  |  |
| 3794 | **RHD4-02-002-A02-(SW)-MH Works - 1200 mm diameter** |  | 2026-08-09 → 2027-02-07 (+182d) |  |  |  |
| RHD4CZ6A02SW3100 | Excavation and PC Blinding works for MH 1200 mm - (RD-A-2)-Z6-A02-SW | 2026-07-29 A | 2026-07-30 → 2026-08-05 A (+6d) |  | 0% → 100% |  |
| RHD4CZ6A02SW3200 | Installation of Base for MH 1200 mm - (RD-A-2)-Z6-A02-SW | 2026-08-01 → 2027-01-30 (+182d) | 2026-08-02 → 2027-01-31 (+182d) |  |  |  |
| RHD4CZ6A02SW3300 | MH Ring and C.Slab works and Backfilling works for MH 1200 mm - (RD-A-2)-Z6-A02-SW | 2026-08-03 → 2027-02-01 (+182d) | 2026-08-04 → 2027-02-02 (+182d) |  |  |  |
| RHD4CZ6A02SW3400 | Steel Cover for MH 1200 mm - (RD-A-2)-Z6-A02-SW | 2026-08-05 → 2027-02-03 (+182d) | 2026-08-06 → 2027-02-04 (+182d) |  |  |  |
| RHD4CZ6A02SW3500 | Finishing, Benching, Testing works for MH 1200 mm - (RD-A-2)-Z6-A02-SW | 2026-08-08 → 2027-02-06 (+182d) | 2026-08-09 → 2027-02-07 (+182d) |  |  |  |
| 3979 | **RHD4-02-002-A02-(SW)-UPVC Pipes - 200 mm diameter** |  | 2026-08-06 → 2026-10-28 (+83d) |  |  |  |
| RHD4CZ6A02SW2100 | Excavation works for UPVC Pipe Line 200 mm - (RD-A-2)-Z6-A02-SW | 2026-07-27 A | 2026-07-28 → 2026-08-11 A (+14d) |  | 0% → 100% |  |
| RHD4CZ6A02SW2200 | Bedding works for UPVC Pipe Line 200 mm - (RD-A-2)-Z6-A02-SW | 2026-07-29 A | 2026-07-30 → 2026-08-12 A (+13d) |  | 0% → 100% |  |
| RHD4CZ6A02SW2300 | Installing for UPVC Pipe Line 200 mm - (RD-A-2)-Z6-A02-SW | 2026-08-01 A | 2026-08-02 → 2026-08-15 A (+13d) |  | 0% → 100% |  |
| RHD4CZ6A02SW2500 | Backfilling and warning tape works for UPVC Pipe Line 200 mm - (RD-A-2)-Z6-A02-SW | 2026-08-05 A | 2026-08-06 → 2026-08-17 A (+11d) |  | 0% → 100% |  |
| RHD4CZ6A02SW2400 | Primary Test for UPVC Pipe Line 200 mm - (RD-A-2)-Z6-A02-SW | 2026-08-03 → 2026-10-27 A (+85d) | 2026-08-04 → 2026-10-28 A (+85d) |  | 0% → 100% |  |
| 5145 | **RHD4-02-002-Z6-A02-Potable Network - PT** | 2026-08-10 → 2027-02-13 (+187d) | 2026-09-01 → 2027-03-08 (+188d) |  |  |  |
| 4962 | **RHD4-02-002-A02-(PT)-Gate Valves (Direct Buried)** | 2026-08-15 → 2027-02-17 (+186d) | 2026-08-23 → 2027-02-27 (+188d) |  |  |  |
| RHD4CZ6A02PT3100 | Installation for Direct Buried Gate Valves - (RD-A-2)-Z6-A02-PT | 2026-08-15 → 2027-02-17 (+186d) | 2026-08-16 → 2027-02-18 (+186d) |  |  |  |
| RHD4CZ6A02PT3200 | Stem and Service box for Direct Buried Gate Valves - (RD-A-2)-Z6-A02-PT | 2026-08-22 → 2027-02-25 (+187d) | 2026-08-23 → 2027-02-27 (+188d) |  |  |  |

| ID | Task | Start | Finish | Complete | Other |
| --- | --- | --- | --- | --- | --- |
| 4969 | **RHD4-02-002-A02-(PT)-Fire Hydrant** | 2026-08-22 → 2027-02-25 (+187d) | 2026-09-01 → 2027-03-08 (+188d) |  |  |
| RHD4CZ6A02PT4100 | Excavation and Bedding and Pipe Installation for Fire Hydrant - (RD-A-2)-Z6-A02-PT | 2026-08-22 → 2027-02-25 (+187d) | 2026-08-23 → 2027-02-27 (+188d) |  |  |
| RHD4CZ6A02PT4200 | Valve Installation for Fire Hydrant - (RD-A-2)-Z6-A02-PT | 2026-08-24 → 2027-02-28 (+188d) | 2026-08-25 → 2027-03-01 (+188d) |  |  |
| RHD4CZ6A02PT4300 | Stem for Fire Hydrant - (RD-A-2)-Z6-A02-PT | 2026-08-26 → 2027-03-02 (+188d) | 2026-08-27 → 2027-03-03 (+188d) |  |  |
| RHD4CZ6A02PT4400 | Fire Installation for Fire Hydrant - (RD-A-2)-Z6-A02-PT | 2026-08-29 → 2027-03-04 (+187d) | 2026-08-30 → 2027-03-06 (+188d) |  |  |
| RHD4CZ6A02PT4500 | Protection Barriers for Fire Hydrant - (RD-A-2)-Z6-A02-PT | 2026-08-31 → 2027-03-07 (+188d) | 2026-09-01 → 2027-03-08 (+188d) |  |  |
| 4958 | **RHD4-02-002-A02-(PT)-HDPE Pipes - 160 mm diameter** | 2026-08-10 → 2027-02-13 (+187d) | 2026-08-20 → 2027-02-24 (+188d) |  |  |
| RHD4CZ6A02PT1101 | Excavation works for HDPE Pipline 160 mm - (RD-A-2)-Z6-A02-PT | 2026-08-10 → 2027-02-13 (+187d) | 2026-08-11 → 2027-02-14 (+187d) |  |  |
| RHD4CZ6A02PT1201 | Bedding works for HDPE Pipline 160 mm - (RD-A-2)-Z6-A02-PT | 2026-08-12 → 2027-02-15 (+187d) | 2026-08-13 → 2027-02-16 (+187d) |  |  |
| RHD4CZ6A02PT1301 | Installing for HDPE Pipline 160 mm - (RD-A-2)-Z6-A02-PT | 2026-08-15 → 2027-02-17 (+186d) | 2026-08-16 → 2027-02-18 (+186d) |  |  |
| RHD4CZ6A02PT1401 | Primary Test for HDPE Pipline 160 mm - (RD-A-2)-Z6-A02-PT | 2026-08-17 → 2027-02-20 (+187d) | 2026-08-18 → 2027-02-21 (+187d) |  |  |
| RHD4CZ6A02PT1501 | Backfilling and warning tape works for HDPE Pipline 160 mm - (RD-A-2)-Z6-A02-PT | 2026-08-19 → 2027-02-23 (+188d) | 2026-08-20 → 2027-02-24 (+188d) |  |  |
| 5201 | **RHD4-02-002-Z6-A02-Low Voltage Network - LV** | 2026-08-12 → 2027-02-15 (+187d) | 2026-09-28 → 2027-03-27 (+180d) |  |  |
| 5202 | **RHD4-02-002-A02-(LV)-Low Voltage duct banks** | 2026-08-12 → 2027-02-15 (+187d) | 2026-08-22 → 2027-02-25 (+187d) |  |  |
| RHD4CZ6A02LV2100 | Excavation of Duct Banks for Low Voltage Network - (RD-A-2)-Z6-A02-LV | 2026-08-12 → 2027-02-15 (+187d) | 2026-08-13 → 2027-02-16 (+187d) |  | resources Skilled labor [17.64 h]; Unskilled Labor [17.64 h]; Equipment Opreator [35.18 h]; Excavator-Poclain [17.64 h]; Dump Truck [17.64 h]; Duct bank for LV cables UPVC (2xø110mm) [2.43 m] → Skilled labor [17.64 h]; Unskilled Labor [17.64 h]; Equipment Opreator [35.2 h]; Excavator-Poclain [17.64 h]; Dump Truck [17.64 h]; Duct bank for LV cables UPVC (2xø110mm) [2.43 m] |
| RHD4CZ6A02LV2200 | Installation of Duct Banks for Low Voltage Network - (RD-A-2)-Z6-A02-LV | 2026-08-15 → 2027-02-17 (+186d) | 2026-08-17 → 2027-02-20 (+187d) |  |  |
| RHD4CZ6A02LV2300 | Pouring of Duct Banks for Low Voltage Network - (RD-A-2)-Z6-A02-LV | 2026-08-18 → 2027-02-21 (+187d) | 2026-08-19 → 2027-02-23 (+188d) |  |  |
| RHD4CZ6A02LV2400 | Backfilling of Duct Banks for Low Voltage Network - (RD-A-2)-Z6-A02-LV | 2026-08-20 → 2027-02-24 (+188d) | 2026-08-22 → 2027-02-25 (+187d) |  |  |
| 5203 | **RHD4-02-002-A02-(LV)-Low Voltage Drawpit** | 2026-09-14 → 2027-03-14 (+181d) | 2026-09-17 → 2027-03-17 (+181d) |  |  |
| RHD4CZ6A02LV5100 | Excavation of Drawpit size 900x900x1000mm for Low Voltage Network - (RD-A-2)-Z6-A02-LV | 2026-09-14 → 2027-03-14 (+181d) | 2026-09-15 → 2027-03-15 (+181d) |  |  |
| RHD4CZ6A02LV5200 | Installation of Drawpit size 900x900x1000mm for Low Voltage Network - (RD-A-2)-Z6-A02-LV | 2026-09-16 → 2027-03-16 (+181d) | 2026-09-17 → 2027-03-17 (+181d) |  |  |
| 5204 | **RHD4-02-002-A02-(LV)-Low Voltage cables** | 2026-09-19 → 2027-03-18 (+180d) | 2026-09-28 → 2027-03-27 (+180d) |  |  |
| RHD4CZ6A02LV3100 | Excavation for Low Voltage Cables for Low Voltage Network - (RD-A-2)-Z6-A02-LV | 2026-09-19 → 2027-03-18 (+180d) | 2026-09-20 → 2027-03-20 (+181d) |  |  |
| RHD4CZ6A02LV3200 | Cable Laying of Low Voltage Cables for Low Voltage Network - (RD-A-2)-Z6-A02-LV | 2026-09-21 → 2027-03-21 (+181d) | 2026-09-22 → 2027-03-22 (+181d) |  |  |
| RHD4CZ6A02LV3300 | Warning tape and Backfill for Low Voltage Cables for Low Voltage Network - (RD-A-2)-Z6-A02-LV | 2026-09-24 → 2027-03-23 (+180d) | 2026-09-26 → 2027-03-24 (+179d) |  |  |
| RHD4CZ6A02LV3400 | Testing of Low Voltage Cables for Low Voltage Network - (RD-A-2)-Z6-A02-LV | 2026-09-27 → 2027-03-25 (+179d) | 2026-09-28 → 2027-03-27 (+180d) |  |  |
| 5207 | **RHD4-02-002-Z6-A02-Street Lighting Network - SL** | 2026-11-14 → 2027-04-15 (+152d) | 2026-12-06 → 2027-05-08 (+153d) |  |  |
| 5210 | **RHD4-02-002-A02-(SL)-Street Lighting cables** | 2026-11-14 → 2027-04-15 (+152d) | 2026-11-22 → 2027-04-24 (+153d) |  |  |
| RHD4CZ6A02SL3100 | Excavation for Street Lighting Cables for Street Lighting Network - (RD-A-2)-Z6-A02-SL | 2026-11-14 → 2027-04-15 (+152d) | 2026-11-15 → 2027-04-17 (+153d) |  |  |
| RHD4CZ6A02SL3200 | Cable Laying of Street Lighting Cables for Street Lighting Network - (RD-A-2)-Z6-A02-SL | 2026-11-16 → 2027-04-18 (+153d) | 2026-11-17 → 2027-04-19 (+153d) |  |  |
| RHD4CZ6A02SL3300 | Warning tape and Backfill for Street Lighting Cables for Street Lighting Network - (RD-A-2)-Z6-A02-SL | 2026-11-18 → 2027-04-20 (+153d) | 2026-11-19 → 2027-04-21 (+153d) |  |  |
| RHD4CZ6A02SL3400 | Testing of Street Lighting Cables for Street Lighting Network - (RD-A-2)-Z6-A02-SL | 2026-11-21 → 2027-04-22 (+152d) | 2026-11-22 → 2027-04-24 (+153d) |  |  |
| 5211 | **RHD4-02-002-A02-(SL)-Street Lighting Poles** | 2026-11-23 → 2027-04-25 (+153d) | 2026-12-06 → 2027-05-08 (+153d) |  |  |
| RHD4CZ6A02SL1100 | Excavation for RC Base for Lighting Poles for Street Lighting Network - (RD-A-2)-Z6-A02-SL | 2026-11-23 → 2027-04-25 (+153d) | 2026-11-24 → 2027-04-26 (+153d) |  |  |
| RHD4CZ6A02SL1200 | Installation for RC Base for Lighting Poles for Street Lighting Network - (RD-A-2)-Z6-A02-SL | 2026-11-25 → 2027-04-27 (+153d) | 2026-11-26 → 2027-04-28 (+153d) |  |  |
| RHD4CZ6A02SL1300 | Backfill for RC Base for Lighting Poles for Street Lighting Network - (RD-A-2)-Z6-A02-SL | 2026-11-28 → 2027-04-29 (+152d) | 2026-11-29 → 2027-05-01 (+153d) |  |  |
| RHD4CZ6A02SL1400 | Installation for Lighting Poles for Street Lighting Network - (RD-A-2)-Z6-A02-SL | 2026-11-30 → 2027-05-02 (+153d) | 2026-12-01 → 2027-05-03 (+153d) |  |  |
| RHD4CZ6A02SL1500 | Luminaire Installation for Lighting Poles for Street Lighting Network - (RD-A-2)-Z6-A02-SL | 2026-12-05 → 2027-05-06 (+152d) | 2026-12-06 → 2027-05-08 (+153d) |  |  |
| 5213 | **RHD4-02-002-A02-(SL)-Street Lighting Earthing System** | 2026-12-02 → 2027-05-04 (+153d) | 2026-12-03 → 2027-05-05 (+153d) |  |  |
| RHD4CZ6A02SL6100 | Installation of Earthing for Lighting Poles and Fedder Pillers for Street Lighting Network - (RD-A-2)-Z6-A02-SL | 2026-12-02 → 2027-05-04 (+153d) | 2026-12-03 → 2027-05-05 (+153d) |  | resources Skilled labor [0.76 h]; Unskilled Labor [0.76 h]; Equipment Opreator [1.42 h]; Excavator-Poclain [0.76 h]; Dump Truck [0.76 h]; Including lighting poles circuits - ER [1 Unit] → Skilled labor [0.8 h]; Unskilled Labor [0.8 h]; Equipment Opreator [1.42 h]; Excavator-Poclain [0.8 h]; Dump Truck [0.8 h]; Including lighting poles circuits - ER [1 Unit] |
| 5219 | **RHD4-02-002-Z6-A02-Telecommunications Network - TC** | 2026-12-07 → 2027-05-09 (+153d) | 2026-12-15 → 2027-05-22 (+158d) |  |  |
| 5220 | **RHD4-02-002-A02-(TC)-Telecommunications Ducts** | 2026-12-07 → 2027-05-09 (+153d) | 2026-12-15 → 2027-05-22 (+158d) |  |  |
| RHD4CZ6A02TC2100 | Excavation of HDPE Ducts for Telecom Network - (RD-A-2)-Z6-A02-TC | 2026-12-07 → 2027-05-09 (+153d) | 2026-12-08 → 2027-05-10 (+153d) |  |  |
| RHD4CZ6A02TC2200 | Installation of HDPE Ducts for Telecom Network - (RD-A-2)-Z6-A02-TC | 2026-12-09 → 2027-05-11 (+153d) | 2026-12-12 → 2027-05-13 (+152d) |  |  |
| RHD4CZ6A02TC2400 | Backfilling of HDPE Ducts for Telecom Network - (RD-A-2)-Z6-A02-TC | 2026-12-14 → 2027-05-20 (+157d) | 2026-12-15 → 2027-05-22 (+158d) |  |  |
| 5221 | **RHD4-02-002-A02-(TC)-Telecommunications Manholes** | 2026-12-09 → 2027-05-11 (+153d) | 2026-12-13 → 2027-05-19 (+157d) |  |  |
| RHD4CZ6A02TC5100 | Excavation for Manholes for Telecom Network - (RD-A-2)-Z6-A02-TC | 2026-12-09 → 2027-05-11 (+153d) | 2026-12-10 → 2027-05-12 (+153d) |  |  |
| RHD4CZ6A02TC5200 | Installation of Manholes for Telecom Network - (RD-A-2)-Z6-A02-TC | 2026-12-12 → 2027-05-13 (+152d) | 2026-12-13 → 2027-05-19 (+157d) |  |  |
| 5223 | **RHD4-02-002-Z6-A02-Information and Communication Technologies - ICT** | 2026-12-16 → 2027-05-23 (+158d) | 2026-12-27 → 2027-06-02 (+157d) |  |  |
| 5224 | **RHD4-02-002-A02-(ICT)-Information and Communication Technologies Ducts** | 2026-12-16 → 2027-05-23 (+158d) | 2026-12-27 → 2027-06-02 (+157d) |  |  |
| RHD4CZ6A02ICT2100 | Excavation of HDPE Ducts for ICT Network - (RD-A-2)-Z6-A02-ICT | 2026-12-16 → 2027-05-23 (+158d) | 2026-12-19 → 2027-05-25 (+157d) |  |  |
| RHD4CZ6A02ICT2200 | Installation of HDPE Ducts for ICT Network - (RD-A-2)-Z6-A02-ICT | 2026-12-20 → 2027-05-26 (+157d) | 2026-12-23 → 2027-05-30 (+158d) |  | resources Carpenter [3.48 h]; Skilled labor [35.18 h]; Unskilled Labor [35.18 h]; Steel Fixer [3.48 h]; (2*50mm) HDPE ducts -ICT [210.08 m] → Carpenter [3.48 h]; Skilled labor [35.2 h]; Unskilled Labor [35.2 h]; Steel Fixer [3.48 h]; (2*50mm) HDPE ducts -ICT [210.08 m] |
| RHD4CZ6A02ICT2400 | Backfilling of HDPE Ducts for ICT Network - (RD-A-2)-Z6-A02-ICT | 2026-12-24 → 2027-05-31 (+158d) | 2026-12-27 → 2027-06-02 (+157d) |  |  |
| 5225 | **RHD4-02-002-A02-(ICT)-Information and Communication Technologies Manholes** | 2026-12-20 → 2027-05-26 (+157d) | 2026-12-23 → 2027-05-30 (+158d) |  |  |
| RHD4CZ6A02ICT5100 | Excavation for Manholes for ICT Network - (RD-A-2)-Z6-A02-ICT | 2026-12-20 → 2027-05-26 (+157d) | 2026-12-21 → 2027-05-27 (+157d) |  |  |
| RHD4CZ6A02ICT5200 | Installation of Manholes for ICT Network - (RD-A-2)-Z6-A02-ICT | 2026-12-22 → 2027-05-29 (+158d) | 2026-12-23 → 2027-05-30 (+158d) |  |  |
| 5227 | **RHD4-02-002-Z6-A02-Security Network - CCTV** | 2026-12-28 → 2027-06-17 (+171d) | 2027-01-10 → 2027-06-30 (+171d) |  |  |
| 5229 | **RHD4-02-002-A02-(CCTV)-CCTV Poles** | 2026-12-28 → 2027-06-17 (+171d) | 2027-01-05 → 2027-06-26 (+172d) |  |  |
| RHD4CZ6A02CCTV1100 | Excavation for RC Base for CCTV Poles for Security Network - (RD-A-2)-Z6-A02-CCTV | 2026-12-28 → 2027-06-17 (+171d) | 2026-12-29 → 2027-06-19 (+172d) |  |  |
| RHD4CZ6A02CCTV1200 | Installation for RC Base for CCTV Poles for Security Network - (RD-A-2)-Z6-A02-CCTV | 2026-12-30 → 2027-06-20 (+172d) | 2026-12-31 → 2027-06-21 (+172d) |  |  |
| RHD4CZ6A02CCTV1300 | Backfill for RC Base for CCTV Poles for Security Network - (RD-A-2)-Z6-A02-CCTV | 2027-01-02 → 2027-06-22 (+171d) | 2027-01-03 → 2027-06-23 (+171d) |  |  |
| RHD4CZ6A02CCTV1400 | Installation for CCTV Poles for Security Network - (RD-A-2)-Z6-A02-CCTV | 2027-01-04 → 2027-06-24 (+171d) | 2027-01-05 → 2027-06-26 (+172d) |  |  |
| 5230 | **RHD4-02-002-A02-(CCTV)-Camera** | 2027-01-06 → 2027-06-27 (+172d) | 2027-01-07 → 2027-06-28 (+172d) |  |  |
| RHD4CZ6A02CCTV3100 | Installation for Cameras for Security Network - (RD-A-2)-Z6-A02-CCTV | 2027-01-06 → 2027-06-27 (+172d) | 2027-01-07 → 2027-06-28 (+172d) |  |  |
| 5233 | **RHD4-02-002-A02-(CCTV)-CCTV Panels and Components** | 2027-01-09 → 2027-06-29 (+171d) | 2027-01-10 → 2027-06-30 (+171d) |  |  |
| RHD4CZ6A02CCTV6100 | Installation for CCTV Panels for Security Network - (RD-A-2)-Z6-A02-CCTV | 2027-01-09 → 2027-06-29 (+171d) | 2027-01-10 → 2027-06-30 (+171d) |  |  |
| 5433 | **RHD4-02-002-Z6-RA01** | 2026-08-10 → 2026-04-25 (-107d) | 2027-03-29 → 2027-09-06 (+161d) |  |  |
| 5612 | **RHD4-02-002-Z6-RA01-Road Works - RD** | 2026-08-10 → 2026-04-25 (-107d) | 2027-03-29 → 2027-09-06 (+161d) |  |  |
| 5613 | **RHD4-02-002-RA01-(RD)-Subgrade** | 2026-08-10 → 2026-04-25 (-107d) | 2026-08-13 → 2026-05-23 (-82d) |  |  |
| RHD4CZ6RA01RD1100 | Supply, lay and compaction subgrade compacted thickness 300 mm for Roads - (ROUND-01)-Z6-RA01-RD | 2026-08-10 → 2026-04-25 A (-107d) | 2026-08-13 → 2026-05-23 A (-82d) | 0% → 100% | resources Skilled labor [45.63 h]; Unskilled Labor [91.26 h]; Electrician [45.63 h]; Equipment Opreator [311.46 h]; Water Truck [15.03 h]; Roller compactor [22.76 h]; Grader [45.63 h]; Dump Truck [228.04 h]; Subgrade [2193.59 m3] → Skilled labor [45.6 h]; Unskilled Labor [91.26 h]; Electrician [45.6 h]; Equipment Opreator [311.46 h]; Water Truck [15.03 h]; Roller compactor [22.76 h]; Grader [45.6 h]; Dump Truck [228.04 h]; Subgrade [2193.59 m3] |

| ID | Task | Start | Finish | Duration | Complete | Other |
| --- | --- | --- | --- | --- | --- | --- |
| 5614 | **RHD4-02-002-RA01-(RD)-Aggregate Base Course** | 2026-08-15 → 2027-02-01 (+170d) | 2026-08-18 → 2027-02-04 (+170d) |  |  |  |
| RHD4CZ6RA01RD2100 | Supply, lay and compaction Aggregate base course compacted thickness 300 mmfor Roads - (ROUND-01)-Z6-RA01-RD | 2026-08-15 → 2027-02-01 (+170d) | 2026-08-18 → 2027-02-04 (+170d) |  |  |  |
| 5615 | **RHD4-02-002-RA01-(RD)-Bituminous base course Two Layers, including (MC1)&(RC2)** | 2026-09-27 → 2027-03-17 (+171d) | 2027-03-07 → 2027-08-14 (+160d) |  |  |  |
| RHD4CZ6RA01RD3100 | Supply, lay and Asphaltic base course including Prime Coat (MC1) for 1st Layer - (ROUND-01)-Z6-RA01-RD | 2026-09-27 → 2027-03-17 (+171d) | 2026-09-28 → 2027-03-18 (+171d) |  |  |  |
| RHD4CZ6RA01RD3200 | Supply, lay and Asphaltic base course including Tack Coat (RC2) for 2nd Layer - (ROUND-01)-Z6-RA01-RD | 2027-03-06 → 2027-08-12 (+159d) | 2027-03-07 → 2027-08-14 (+160d) |  |  |  |
| 5617 | **RHD4-02-002-RA01-(RD)-Precast Concrete Curb** | 2027-03-08 → 2027-08-15 (+160d) | 2027-03-14 → 2027-08-17 (+156d) |  |  |  |
| RHD4CZ6RA01RD5100 | Supply and installation Precast Concrete Kerb for Roads - (ROUND-01)-Z6-RA01-RD | 2027-03-08 → 2027-08-15 (+160d) | 2027-03-14 → 2027-08-17 (+156d) |  |  | resources Mason [88.97 h]; Skilled labor [29.62 h]; Unskilled Labor [88.97 h]; Equipment Opreator [59.35 h]; Bobcat [29.62 h]; Concrete Mixer Truck [29.62 h]; Precast Concrete Curbstone, type K1 [1226 m] → Mason [88.97 h]; Skilled labor [29.6 h]; Unskilled Labor [88.97 h]; Equipment Opreator [59.35 h]; Bobcat [29.6 h]; Concrete Mixer Truck [29.6 h]; Precast Concrete Curbstone, type K1 [1226 m] |
| 5620 | **RHD4-02-002-RA01-(RD)-Traffic Signage** | 2027-03-15 → 2027-08-18 (+156d) | 2027-03-25 → 2027-08-29 (+157d) |  |  |  |
| RHD4CZ6RA01RD8100 | Installation of Traffic Signage for Road Network - (ROUND-01)-Z6-RA01-RD | 2027-03-15 → 2027-08-18 (+156d) | 2027-03-25 → 2027-08-29 (+157d) |  |  |  |
| 5616 | **RHD4-02-002-RA01-(RD)-Bituminous concrete wearing course including tack coat (RC2)** | 2027-03-15 → 2027-08-18 (+156d) | 2027-03-16 → 2027-08-19 (+156d) |  |  |  |
| RHD4CZ6RA01RD4100 | Supply, lay and compaction Asphaltic wearing course including tack Coat (RC2)for Road Network - (ROUND-01)-Z6-RA01-RD | 2027-03-15 → 2027-08-18 (+156d) | 2027-03-16 → 2027-08-19 (+156d) |  |  |  |
| 5619 | **RHD4-02-002-RA01-(RD)-Pavement Marking** | 2027-03-17 → 2027-08-21 (+157d) | 2027-03-29 → 2027-09-06 (+161d) |  |  |  |
| RHD4CZ6RA01RD7100 | Pavement Markings for Road Network - (ROUND-01)-Z6-RA01-RD | 2027-03-17 → 2027-08-21 (+157d) | 2027-03-22 → 2027-08-25 (+156d) |  |  |  |
| RHD4CZ6RA01RD9100 | Installation for Speed Bump for Road Network - (ROUND-01)-Z6-RA01-RD | 2027-03-23 → 2027-08-26 (+156d) | 2027-03-29 → 2027-09-06 (+161d) | 6d → 10d |  |  |
| 5585 | **RHD4-02-002-Z6-RA01-Street Lighting Network - SL** | 2026-12-07 → 2027-05-09 (+153d) | 2027-01-09 → 2027-06-15 (+157d) |  |  |  |
| 5586 | **RHD4-02-002-RA01-(SL)-Street Lighting duct banks** | 2026-12-07 → 2027-05-09 (+153d) | 2026-12-16 → 2027-05-23 (+158d) |  |  |  |
| RHD4CZ6RA01SL2100 | Excavation of Duct Banks for Street Lighting Network - (ROUND-01)-Z6-RA01-SL | 2026-12-07 → 2027-05-09 (+153d) | 2026-12-08 → 2027-05-10 (+153d) |  |  |  |
| RHD4CZ6RA01SL2200 | Installation of Duct Banks for Street Lighting Network - (ROUND-01)-Z6-RA01-SL | 2026-12-09 → 2027-05-11 (+153d) | 2026-12-12 → 2027-05-13 (+152d) |  |  |  |
| RHD4CZ6RA01SL2300 | Pouring of Duct Banks for Street Lighting Network - (ROUND-01)-Z6-RA01-SL | 2026-12-13 → 2027-05-19 (+157d) | 2026-12-14 → 2027-05-20 (+157d) |  |  | resources Skilled labor [18.08 h]; Unskilled Labor [18.08 h]; Equipment Opreator [7.19 h]; Concrete Mixer Truck [3.59 h]; Concrete Pump [3.59 h]; Road Crossing Duct for Street Lighting cables UPVC (2x?110mm) [16.21 m] → Skilled labor [18.08 h]; Unskilled Labor [18.08 h]; Equipment Opreator [7.2 h]; Concrete Mixer Truck [3.59 h]; Concrete Pump [3.59 h]; Road Crossing Duct for Street Lighting cables UPVC (2x?110mm) [16.21 m] |
| RHD4CZ6RA01SL2400 | Backfilling of Duct Banks for Street Lighting Network - (ROUND-01)-Z6-RA01-SL | 2026-12-15 → 2027-05-22 (+158d) | 2026-12-16 → 2027-05-23 (+158d) |  |  | resources Skilled labor [13.61 h]; Unskilled Labor [13.61 h]; Equipment Opreator [5.45 h]; Excavator-Poclain [5.45 h]; Road Crossing Duct for Street Lighting cables UPVC (2x?110mm) [3.74 m] → Skilled labor [13.6 h]; Unskilled Labor [13.6 h]; Equipment Opreator [5.45 h]; Excavator-Poclain [5.45 h]; Road Crossing Duct for Street Lighting cables UPVC (2x?110mm) [3.74 m] |
| 5587 | **RHD4-02-002-RA01-(SL)-Street Lighting Drawpit** | 2026-12-15 → 2027-05-22 (+158d) | 2026-12-19 → 2027-05-25 (+157d) |  |  |  |
| RHD4CZ6RA01SL5100 | Excavation of Drawpit size 600x600x900mm for Street Lighting Network - (ROUND-01)-Z6-RA01-SL | 2026-12-15 → 2027-05-22 (+158d) | 2026-12-16 → 2027-05-23 (+158d) |  |  | resources Skilled labor [1.85 h]; Unskilled Labor [1.85 h]; Equipment Opreator [1.42 h]; Excavator-Poclain [0.76 h]; Dump Truck [0.76 h]; Drawpit with medium duty steel cover, size600x600x900mm, [0.3 Unit] → Skilled labor [1.85 h]; Unskilled Labor [1.85 h]; Equipment Opreator [1.42 h]; Excavator-Poclain [0.8 h]; Dump Truck [0.8 h]; Drawpit with medium duty steel cover, size600x600x900mm, [0.3 Unit] |
| RHD4CZ6RA01SL5200 | Installation of Drawpit size 600x600x900mm for Street Lighting Network - (ROUND-01)-Z6-RA01-SL | 2026-12-17 → 2027-05-24 (+158d) | 2026-12-19 → 2027-05-25 (+157d) |  |  | resources Skilled labor [1.85 h]; Unskilled Labor [1.85 h]; Equipment Opreator [0.76 h]; Boom Truck [0.76 h]; Drawpit with medium duty steel cover, size600x600x900mm, [1.7 Unit] → Skilled labor [1.85 h]; Unskilled Labor [1.85 h]; Equipment Opreator [0.8 h]; Boom Truck [0.8 h]; Drawpit with medium duty steel cover, size600x600x900mm, [1.7 Unit] |
| 5588 | **RHD4-02-002-RA01-(SL)-Street Lighting cables** | 2026-12-20 → 2027-05-26 (+157d) | 2026-12-28 → 2027-06-03 (+157d) |  |  |  |
| RHD4CZ6RA01SL3100 | Excavation for Street Lighting Cables for Street Lighting Network - (ROUND-01)-Z6-RA01-SL | 2026-12-20 → 2027-05-26 (+157d) | 2026-12-21 → 2027-05-27 (+157d) |  |  |  |
| RHD4CZ6RA01SL3200 | Cable Laying of Street Lighting Cables for Street Lighting Network - (ROUND-01)-Z6-RA01-SL | 2026-12-22 → 2027-05-29 (+158d) | 2026-12-23 → 2027-05-30 (+158d) |  |  | resources Skilled labor [8.82 h]; Unskilled Labor [35.18 h]; Electrician [17.53 h]; Equipment Opreator [26.35 h]; Boom Truck [8.82 h]; Cable Laying Machine [17.53 h]; Cable, Copper 4x10mm2/ CU/XLPE/SWA/PVC + 1x10mm2 CU/PVC [145.33 m] → Skilled labor [8.8 h]; Unskilled Labor [35.2 h]; Electrician [17.53 h]; Equipment Opreator [26.35 h]; Boom Truck [8.8 h]; Cable Laying Machine [17.53 h]; Cable, Copper 4x10mm2/ CU/XLPE/SWA/PVC + 1x10mm2 CU/PVC [145.33 m] |
| RHD4CZ6RA01SL3300 | Warning tape and Backfill for Street Lighting Cables for Street Lighting Network - (ROUND-01)-Z6-RA01-SL | 2026-12-24 → 2027-05-31 (+158d) | 2026-12-26 → 2027-06-01 (+157d) |  |  | resources Skilled labor [8.82 h]; Unskilled Labor [35.18 h]; Electrician [17.53 h]; Equipment Opreator [8.82 h]; Boom Truck [8.82 h]; Cable, Copper 4x10mm2/ CU/XLPE/SWA/PVC + 1x10mm2 CU/PVC [36.33 m] → Skilled labor [8.8 h]; Unskilled Labor [35.2 h]; Electrician [17.53 h]; Equipment Opreator [8.8 h]; Boom Truck [8.8 h]; Cable, Copper 4x10mm2/ CU/XLPE/SWA/PVC + 1x10mm2 CU/PVC [36.33 m] |
| RHD4CZ6RA01SL3400 | Testing of Street Lighting Cables for Street Lighting Network - (ROUND-01)-Z6-RA01-SL | 2026-12-27 → 2027-06-02 (+157d) | 2026-12-28 → 2027-06-03 (+157d) |  |  |  |
| 5589 | **RHD4-02-002-RA01-(SL)-Street Lighting Poles** | 2026-12-29 → 2027-06-05 (+158d) | 2027-01-09 → 2027-06-15 (+157d) |  |  |  |
| RHD4CZ6RA01SL1100 | Excavation for RC Base for Lighting Poles for Street Lighting Network - (ROUND-01)-Z6-RA01-SL | 2026-12-29 → 2027-06-05 (+158d) | 2026-12-30 → 2027-06-06 (+158d) |  |  |  |
| RHD4CZ6RA01SL1200 | Installation for RC Base for Lighting Poles for Street Lighting Network - (ROUND-01)-Z6-RA01-SL | 2026-12-31 → 2027-06-07 (+158d) | 2027-01-02 → 2027-06-08 (+157d) |  |  |  |
| RHD4CZ6RA01SL1300 | Backfill for RC Base for Lighting Poles for Street Lighting Network - (ROUND-01)-Z6-RA01-SL | 2027-01-03 → 2027-06-09 (+157d) | 2027-01-04 → 2027-06-10 (+157d) |  |  |  |
| RHD4CZ6RA01SL1400 | Installation for Lighting Poles for Street Lighting Network - (ROUND-01)-Z6-RA01-SL | 2027-01-05 → 2027-06-12 (+158d) | 2027-01-06 → 2027-06-13 (+158d) |  |  |  |
| RHD4CZ6RA01SL1500 | Luminaire Installation for Lighting Poles for Street Lighting Network - (ROUND-01)-Z6-RA01-SL | 2027-01-07 → 2027-06-14 (+158d) | 2027-01-09 → 2027-06-15 (+157d) |  |  |  |
| 5597 | **RHD4-02-002-Z6-RA01-Telecommunications Network - TC** | 2027-01-10 → 2027-06-16 (+157d) | 2027-01-25 → 2027-07-01 (+157d) |  |  |  |
| 5598 | **RHD4-02-002-RA01-(TC)-Telecommunications Ducts** | 2027-01-10 → 2027-06-16 (+157d) | 2027-01-16 → 2027-06-22 (+157d) |  |  |  |
| RHD4CZ6RA01TC2100 | Excavation of HDPE Ducts for Telecom Network - (ROUND-01)-Z6-RA01-TC | 2027-01-10 → 2027-06-16 (+157d) | 2027-01-11 → 2027-06-17 (+157d) |  |  |  |
| RHD4CZ6RA01TC2200 | Installation of HDPE Ducts for Telecom Network - (ROUND-01)-Z6-RA01-TC | 2027-01-12 → 2027-06-19 (+158d) | 2027-01-13 → 2027-06-20 (+158d) |  |  |  |
| RHD4CZ6RA01TC2400 | Backfilling of HDPE Ducts for Telecom Network - (ROUND-01)-Z6-RA01-TC | 2027-01-14 → 2027-06-21 (+158d) | 2027-01-16 → 2027-06-22 (+157d) |  |  |  |
| 491 | **RHD4-02-002-RA01-(TC)-Telecommunications Manholes** | 2027-01-17 → 2027-06-23 (+157d) | 2027-01-25 → 2027-07-01 (+157d) |  |  |  |
| RHD4CZ6RA01TC5100 | Excavation for Manholes for Telecom Network - (ROUND-01)-Z6-RA01-TC | 2027-01-17 → 2027-06-23 (+157d) | 2027-01-20 → 2027-06-27 (+158d) |  |  | resources Skilled labor [13.61 h]; Unskilled Labor [13.61 h]; Equipment Opreator [10.89 h]; Excavator-Poclain [5.45 h]; Dump Truck [5.45 h]; Manhole Type 1 - TC [0.3 nr] → Skilled labor [13.6 h]; Unskilled Labor [13.6 h]; Equipment Opreator [10.88 h]; Excavator-Poclain [5.44 h]; Dump Truck [5.44 h]; Manhole Type 1 - TC [0.3 nr] |
| RHD4CZ6RA01TC5200 | Installation of Manholes for Telecom Network - (ROUND-01)-Z6-RA01-TC | 2027-01-21 → 2027-06-28 (+158d) | 2027-01-25 → 2027-07-01 (+157d) |  |  | resources Skilled labor [13.61 h]; Unskilled Labor [13.61 h]; Equipment Opreator [5.45 h]; Boom Truck [5.45 h]; Manhole Type 1 - TC [1.7 nr] → Skilled labor [13.6 h]; Unskilled Labor [13.6 h]; Equipment Opreator [5.44 h]; Boom Truck [5.44 h]; Manhole Type 1 - TC [1.7 nr] |
| 5605 | **RHD4-02-002-Z6-RA01-Security Network - CCTV** | 2027-01-17 → 2027-06-23 (+157d) | 2027-03-04 → 2027-08-11 (+160d) |  |  |  |
| 5606 | **RHD4-02-002-RA01-(CCTV)-Civil Works** | 2027-01-17 → 2027-06-23 (+157d) | 2027-01-21 → 2027-07-05 (+165d) |  |  |  |
| RHD4CZ6RA01CCTV2100 | Civil Works for Security Network - (ROUND-01)-Z6-RA01-CCTV | 2027-01-17 → 2027-06-23 (+157d) | 2027-01-21 → 2027-07-05 (+165d) | 5d → 11d |  |  |
| 5607 | **RHD4-02-002-RA01-(CCTV)-CCTV Poles** | 2027-01-26 → 2027-07-06 (+161d) | 2027-02-06 → 2027-07-17 (+161d) |  |  |  |
| RHD4CZ6RA01CCTV1100 | Excavation for RC Base for CCTV Poles for Security Network - (ROUND-01)-Z6-RA01-CCTV | 2027-01-26 → 2027-07-06 (+161d) | 2027-01-27 → 2027-07-07 (+161d) |  |  |  |
| RHD4CZ6RA01CCTV1200 | Installation for RC Base for CCTV Poles for Security Network - (ROUND-01)-Z6-RA01-CCTV | 2027-01-28 → 2027-07-08 (+161d) | 2027-01-30 → 2027-07-10 (+161d) |  |  |  |
| RHD4CZ6RA01CCTV1300 | Backfill for RC Base for CCTV Poles for Security Network - (ROUND-01)-Z6-RA01-CCTV | 2027-01-31 → 2027-07-11 (+161d) | 2027-02-01 → 2027-07-12 (+161d) |  |  |  |
| RHD4CZ6RA01CCTV1400 | Installation for CCTV Poles for Security Network - (ROUND-01)-Z6-RA01-CCTV | 2027-02-02 → 2027-07-13 (+161d) | 2027-02-03 → 2027-07-14 (+161d) |  |  |  |
| RHD4CZ6RA01CCTV1500 | Protection post Installation for CCTV Poles for Security Network - (ROUND-01)-Z6-RA01-CCTV | 2027-02-04 → 2027-07-15 (+161d) | 2027-02-06 → 2027-07-17 (+161d) |  |  |  |
| 5608 | **RHD4-02-002-RA01-(CCTV)-Camera** | 2027-02-07 → 2027-07-18 (+161d) | 2027-02-08 → 2027-07-19 (+161d) |  |  |  |
| RHD4CZ6RA01CCTV3100 | Installation for Cameras for Security Network - (ROUND-01)-Z6-RA01-CCTV | 2027-02-07 → 2027-07-18 (+161d) | 2027-02-08 → 2027-07-19 (+161d) |  |  |  |
| 5609 | **RHD4-02-002-RA01-(CCTV)-Power and Infrastructure** | 2027-02-04 → 2027-07-15 (+161d) | 2027-02-15 → 2027-07-26 (+161d) |  |  |  |
| RHD4CZ6RA01CCTV4100 | Installation of Power outlet, UPS and midspan for PTZ Camerafor Cameras for Security Network - (ROUND-01)-Z6-RA01-CCTV | 2027-02-04 → 2027-07-15 (+161d) | 2027-02-06 → 2027-07-17 (+161d) |  |  |  |
| RHD4CZ6RA01CCTV4200 | Short Range Wireless PoP wireless Bridgefor CCTV Poles for Security Network - (ROUND-01)-Z6-RA01-CCTV | 2027-02-07 → 2027-07-18 (+161d) | 2027-02-08 → 2027-07-19 (+161d) |  |  |  |
| RHD4CZ6RA01CCTV4300 | Fiber Optic Cables for 35m height Pole to Main data Center for CCTV Pole for Security Network - (ROUND-01)-Z6-RA01-CCTV | 2027-02-09 → 2027-07-20 (+161d) | 2027-02-15 → 2027-07-26 (+161d) |  |  |  |
| 5610 | **RHD4-02-002-RA01-(CCTV)-Control Room Equipment** | 2027-02-21 → 2027-08-01 (+161d) | 2027-03-04 → 2027-08-11 (+160d) |  |  |  |
| RHD4CZ6RA01CCTV5100 | Installation for Control room Equipment for Security Network - (ROUND-01)-Z6-RA01-CCTV | 2027-02-21 → 2027-08-01 (+161d) | 2027-03-02 → 2027-08-09 (+160d) |  |  |  |
| RHD4CZ6RA01CCTV5200 | Installation of Access Control for Control Room for Security Network - (ROUND-01)-Z6-RA01-CCTV | 2027-03-03 → 2027-08-10 (+160d) | 2027-03-04 → 2027-08-11 (+160d) |  |  |  |
| 5611 | **RHD4-02-002-RA01-(CCTV)-CCTV Panels and Components** | 2027-02-16 → 2027-07-27 (+161d) | 2027-02-20 → 2027-07-31 (+161d) |  |  |  |
| RHD4CZ6RA01CCTV6100 | Installation for CCTV Panels for Security Network - (ROUND-01)-Z6-RA01-CCTV | 2027-02-16 → 2027-07-27 (+161d) | 2027-02-20 → 2027-07-31 (+161d) |  |  |  |
| 3352 | **RHD4-02-002-Z5** | 2026-06-13 → 2026-04-16 (-58d) | 2027-12-15 → 2028-07-13 (+211d) |  |  |  |
| 3920 | **RHD4-02-002-Z5-C051** | 2026-07-25 → 2026-04-16 (-100d) | 2027-06-30 → 2027-11-29 (+152d) |  |  |  |
| 4099 | **RHD4-02-002-Z5-C051-Road Works - RD** | 2026-08-24 → 2026-04-16 (-130d) | 2027-06-30 → 2027-11-29 (+152d) |  |  |  |
| 4100 | **RHD4-02-002-C051-(RD)-Subgrade** | 2026-08-24 → 2026-04-16 (-130d) | 2026-09-05 → 2026-05-23 (-105d) |  |  |  |
| RHD4CZ5C051RD1100 | Supply, lay and compaction subgrade compacted thickness 300 mm for Roads - (RD-C-5 /1)-Z5-C051-RD | 2026-08-24 → 2026-04-16 A (-130d) | 2026-09-05 → 2026-05-23 A (-105d) |  | 0% → 100% |  |
| 4101 | **RHD4-02-002-C051-(RD)-Aggregate Base Course** | 2026-09-06 → 2027-02-20 (+167d) | 2026-09-10 → 2027-02-25 (+168d) |  |  |  |
| RHD4CZ5C051RD2100 | Supply, lay and compaction Aggregate base course compacted thickness 300 mmfor Roads - (RD-C-5 /1)-Z5-C051-RD | 2026-09-06 → 2027-02-20 (+167d) | 2026-09-10 → 2027-02-25 (+168d) |  |  |  |
| 4102 | **RHD4-02-002-C051-(RD)-Bituminous base course Two Layers, including (MC1)&(RC2)** | 2026-09-12 → 2027-02-27 (+168d) | 2027-06-03 → 2027-11-02 (+152d) |  |  |  |

| ID | Task | Start | Finish | Complete | Other |
| --- | --- | --- | --- | --- | --- |
| RHD4CZ5C051RD3100 | Supply, lay and Asphaltic base course including Prime Coat (MC1) for 1st Layer - (RD-C-5 /1)-Z5-C051-RD | 2026-09-12 → 2027-02-27 (+168d) | 2026-09-13 → 2027-02-28 (+168d) |  |  |
| RHD4CZ5C051RD3200 | Supply, lay and Asphaltic base course including Tack Coat (RC2) for 2nd Layer - (RD-C-5 /1)-Z5-C051-RD | 2027-06-02 → 2027-11-01 (+152d) | 2027-06-03 → 2027-11-02 (+152d) |  |  |
| 4104 | **RHD4-02-002-C051-(RD)-Precast Concrete Curb** | 2027-06-05 → 2027-11-03 (+151d) | 2027-06-08 → 2027-11-07 (+152d) |  |  |
| RHD4CZ5C051RD5100 | Supply and installation Precast Concrete Kerb for Roads - (RD-C-5 /1)-Z5-C051-RD | 2027-06-05 → 2027-11-03 (+151d) | 2027-06-08 → 2027-11-07 (+152d) |  |  |
| 4107 | **RHD4-02-002-C051-(RD)-Traffic Signage** | 2027-06-09 → 2027-11-08 (+152d) | 2027-06-15 → 2027-11-14 (+152d) |  |  |
| RHD4CZ5C051RD8100 | Installation of Traffic Signage for Road Network - (RD-C-5 /1)-Z5-C051-RD | 2027-06-09 → 2027-11-08 (+152d) | 2027-06-15 → 2027-11-14 (+152d) |  |  |
| 4105 | **RHD4-02-002-C051-(RD)-Precast Interlocking Block Pavers** | 2027-06-16 → 2027-11-15 (+152d) | 2027-06-22 → 2027-11-21 (+152d) |  |  |
| RHD4CZ5C051RD6100 | Interlocking block pavers for sidewalk-footpath for Side walks and Parking areas - (RD-C-5 /1)-Z5-C051-RD | 2027-06-16 → 2027-11-15 (+152d) | 2027-06-22 → 2027-11-21 (+152d) |  |  |
| 4103 | **RHD4-02-002-C051-(RD)-Bituminous concrete wearing course including tack coat (RC2)** | 2027-06-23 → 2027-11-22 (+152d) | 2027-06-24 → 2027-11-23 (+152d) |  |  |
| RHD4CZ5C051RD4100 | Supply, lay and compaction Asphaltic wearing course including tack Coat (RC2)for Road Network - (RD-C-5 /1)-Z5-C051-RD | 2027-06-23 → 2027-11-22 (+152d) | 2027-06-24 → 2027-11-23 (+152d) |  | resources Skilled labor [8.93 h]; Unskilled Labor [53.47 h]; Equipment Opreator [133.62 h]; Bobcat [8.93 h]; Roller compactor [8.93 h]; Asphalt Paver [8.93 h]; Rubber Compactor [17.86 h]; MC1/RC2 Sprinkler [8.93 h]; Dump Truck [80.15 h]; Bituminous concrete wearing course, (Grading I - Class A), including tack coat (RC2) [424.98 m3] → Skilled labor [8.93 h]; Unskilled Labor [53.47 h]; Equipment Opreator [133.6 h]; Bobcat [8.93 h]; Roller compactor [8.93 h]; Asphalt Paver [8.93 h]; Rubber Compactor [17.86 h]; MC1/RC2 Sprinkler [8.93 h]; Dump Truck [80.15 h]; Bituminous concrete wearing course, (Grading I - Class A), including tack coat (RC2) [424.98 m3] |
| 4106 | **RHD4-02-002-C051-(RD)-Pavement Marking** | 2027-06-26 → 2027-11-24 (+151d) | 2027-06-30 → 2027-11-29 (+152d) |  |  |
| RHD4CZ5C051RD7100 | Pavement Markings for Road Network - (RD-C-5 /1)-Z5-C051-RD | 2027-06-26 → 2027-11-24 (+151d) | 2027-06-30 → 2027-11-29 (+152d) |  |  |
| 3924 | **RHD4-02-002-Z5-C051-Storm Network - ST** |  | 2026-08-26 → 2027-02-13 (+171d) |  |  |
| 3942 | **RHD4-02-002-C051-(ST)-MH Works - 1500 mm diameter** |  | 2026-08-22 → 2027-02-08 (+170d) |  |  |
| RHD4CZ5C051ST3101 | Excavation and PC Blinding works for MH 1500 mm - (RD-C-5 /1)-Z5-C051-ST | 2026-07-25 A | 2026-07-27 → 2026-08-06 A (+10d) | 0% → 100% |  |
| RHD4CZ5C051ST3201 | Installation of Base for MH 1500 mm - (RD-C-5 /1)-Z5-C051-ST | 2026-07-28 A | 2026-07-29 → 2026-08-09 A (+11d) | 0% → 100% |  |
| RHD4CZ5C051ST3301 | MH Ring and C.Slab works and Backfilling works for MH 1500 mm - (RD-C-5 /1)-Z5-C051-ST | 2026-07-30 → 2026-10-20 A (+82d) | 2026-08-01 → 2026-10-21 A (+81d) | 0% → 100% |  |
| RHD4CZ5C051ST3401 | Steel Cover for MH 1500 mm - (RD-C-5 /1)-Z5-C051-ST | 2026-08-02 → 2027-01-30 (+181d) | 2026-08-03 → 2027-01-31 (+181d) |  |  |
| RHD4CZ5C051ST3501 | Finishing, Benching, Testing works for MH 1500 mm - (RD-C-5 /1)-Z5-C051-ST | 2026-08-20 → 2027-02-07 (+171d) | 2026-08-22 → 2027-02-08 (+170d) |  |  |
| 3941 | **RHD4-02-002-C051-(ST)-MH Works - 1200 mm diameter** |  | 2026-08-26 → 2027-02-13 (+171d) |  |  |
| RHD4CZ5C051ST3100 | Excavation and PC Blinding works for MH 1200 mm - (RD-C-5 /1)-Z5-C051-ST | 2026-07-25 A | 2026-07-27 → 2026-08-05 A (+9d) | 0% → 100% |  |
| RHD4CZ5C051ST3200 | Installation of Base for MH 1200 mm - (RD-C-5 /1)-Z5-C051-ST | 2026-07-28 A | 2026-08-01 → 2026-08-13 A (+12d) | 0% → 100% | resources Skilled labor [39.97 h]; Unskilled Labor [39.97 h]; Equipment Opreator [16.01 h]; Boom Truck [7.95 h]; Concrete Mixer Truck [7.95 h]; MH (1200mm Diameter) - ST - depth 1.50 - 2.5m [0.5 nr]; MH (1200mm Diameter) - ST - depth 2.51 - 3.5m [0.75 nr]; MH (1200mm Diameter) - ST - depth 3.51 - 4.5m [0.25 nr]; MH (1200mm Diameter) - ST - depth 4.51 - 5.5m [0.25 nr] → Skilled labor [40 h]; Unskilled Labor [40 h]; Equipment Opreator [16 h]; Boom Truck [7.95 h]; Concrete Mixer Truck [7.95 h]; MH (1200mm Diameter) - ST - depth 1.50 - 2.5m [0.5 nr]; MH (1200mm Diameter) - ST - depth 2.51 - 3.5m [0.75 nr]; MH (1200mm Diameter) - ST - depth 3.51 - 4.5m [0.25 nr]; MH (1200mm Diameter) - ST - depth 4.51 - 5.5m [0.25 nr] |
| RHD4CZ5C051ST3300 | MH Ring and C.Slab works and Backfilling works for MH 1200 mm - (RD-C-5 /1)-Z5-C051-ST | 2026-08-02 → 2026-10-20 A (+79d) | 2026-08-05 → 2027-01-30 (+178d) | 0% → 90% | resources Skilled labor [39.97 h]; Unskilled Labor [39.97 h]; Equipment Opreator [27.99 h]; Boom Truck [16.01 h]; Concrete Mixer Truck [11.98 h]; MH (1200mm Diameter) - ST - depth 1.50 - 2.5m [0.7 nr]; MH (1200mm Diameter) - ST - depth 2.51 - 3.5m [1.05 nr]; MH (1200mm Diameter) - ST - depth 3.51 - 4.5m [0.35 nr]; MH (1200mm Diameter) - ST - depth 4.51 - 5.5m [0.35 nr] → Skilled labor [40 h]; Unskilled Labor [40 h]; Equipment Opreator [28 h]; Boom Truck [16 h]; Concrete Mixer Truck [12 h]; MH (1200mm Diameter) - ST - depth 1.50 - 2.5m [0.7 nr]; MH (1200mm Diameter) - ST - depth 2.51 - 3.5m [1.05 nr]; MH (1200mm Diameter) - ST - depth 3.51 - 4.5m [0.35 nr]; MH (1200mm Diameter) - ST - depth 4.51 - 5.5m [0.35 nr] |
| RHD4CZ5C051ST3400 | Steel Cover for MH 1200 mm - (RD-C-5 /1)-Z5-C051-ST | 2026-08-20 → 2027-02-07 (+171d) | 2026-08-23 → 2027-02-09 (+170d) |  |  |
| RHD4CZ5C051ST3500 | Finishing, Benching, Testing works for MH 1200 mm - (RD-C-5 /1)-Z5-C051-ST | 2026-08-24 → 2027-02-10 (+170d) | 2026-08-26 → 2027-02-13 (+171d) |  |  |
| 3928 | **RHD4-02-002-C051-(ST)-GRP Pipes - 700 mm diameter** |  | 2026-08-08 → 2026-09-20 (+43d) |  |  |
| RHD4CZ5C051ST1103 | Excavation works for GRP Pipe Line 700 mm - (RD-C-5 /1)-Z5-C051-ST | 2026-07-28 A | 2026-07-29 → 2026-08-05 A (+7d) | 0% → 100% |  |
| RHD4CZ5C051ST1203 | Bedding works for GRP Pipe Line 700 mm - (RD-C-5 /1)-Z5-C051-ST | 2026-07-30 A | 2026-08-01 → 2026-08-08 A (+7d) | 0% → 100% |  |
| RHD4CZ5C051ST1303 | Installing for GRP Pipe Line 700 mm - (RD-C-5 /1)-Z5-C051-ST | 2026-08-02 A | 2026-08-03 → 2026-08-10 A (+7d) | 0% → 100% |  |
| RHD4CZ5C051ST1403 | Primary Test for GRP Pipe Line 700 mm - (RD-C-5 /1)-Z5-C051-ST | 2026-08-04 A | 2026-08-05 → 2026-09-20 A (+46d) | 0% → 100% |  |
| RHD4CZ5C051ST1503 | Backfilling and warning tape works for GRP Pipe Line 700 mm - (RD-C-5 /1)-Z5-C051-ST | 2026-08-06 A | 2026-08-08 → 2026-08-12 A (+4d) | 0% → 100% |  |
| 3927 | **RHD4-02-002-C051-(ST)-GRP Pipes - 600 mm diameter** |  | 2026-08-16 → 2027-02-06 (+174d) |  |  |
| RHD4CZ5C051ST1102 | Excavation works for GRP Pipe Line 600 mm - (RD-C-5 /1)-Z5-C051-ST | 2026-07-30 A | 2026-08-02 → 2026-09-19 A (+48d) | 0% → 100% |  |
| RHD4CZ5C051ST1202 | Bedding works for GRP Pipe Line 600 mm - (RD-C-5 /1)-Z5-C051-ST | 2026-08-03 A | 2026-08-05 → 2026-09-20 A (+46d) | 0% → 100% |  |
| RHD4CZ5C051ST1302 | Installing for GRP Pipe Line 600 mm - (RD-C-5 /1)-Z5-C051-ST | 2026-08-06 → 2026-08-09 A (+3d) | 2026-08-09 → 2026-09-21 A (+43d) | 0% → 100% |  |
| RHD4CZ5C051ST1502 | Backfilling and warning tape works for GRP Pipe Line 600 mm - (RD-C-5 /1)-Z5-C051-ST | 2026-08-13 → 2026-08-11 A (-2d) | 2026-08-16 → 2026-09-22 A (+37d) | 0% → 100% |  |
| RHD4CZ5C051ST1402 | Primary Test for GRP Pipe Line 600 mm - (RD-C-5 /1)-Z5-C051-ST | 2026-08-10 → 2026-09-19 A (+40d) | 2026-08-12 → 2027-02-06 (+178d) | 0% → 30% |  |
| 2413 | **RHD4-02-002-C051-(ST)-GRP Pipes - 500 mm diameter** | 2026-08-03 → 2026-08-04 (+1d) | 2026-08-13 → 2026-09-20 (+38d) |  |  |
| RHD4CZ5C051ST1101 | Excavation works for GRP Pipe Line 500 mm - (RD-C-5 /1)-Z5-C051-ST | 2026-08-03 → 2026-08-04 A (+1d) | 2026-08-04 → 2026-08-05 A (+1d) | 0% → 100% | resources Skilled labor [7.19 h]; Unskilled Labor [7.19 h]; Equipment Opreator [8.6 h]; Excavator-Poclain [7.19 h]; Dump Truck [1.42 h]; GRP (500mm Diameter) - ST - Depth: 2.51m - 3.5m [14.83 m]; GRP (500mm Diameter) - ST - Depth: more than 3.5m [18.54 m] → Skilled labor [7.2 h]; Unskilled Labor [7.2 h]; Equipment Opreator [8.6 h]; Excavator-Poclain [7.2 h]; Dump Truck [1.42 h]; GRP (500mm Diameter) - ST - Depth: 2.51m - 3.5m [14.83 m]; GRP (500mm Diameter) - ST - Depth: more than 3.5m [18.54 m] |
| RHD4CZ5C051ST1201 | Bedding works for GRP Pipe Line 500 mm - (RD-C-5 /1)-Z5-C051-ST | 2026-08-05 → 2026-08-06 A (+1d) | 2026-08-06 → 2026-08-08 A (+2d) | 0% → 100% | resources Skilled labor [7.19 h]; Unskilled Labor [14.38 h]; Equipment Opreator [14.38 h]; Excavator-Poclain [7.19 h]; Dump Truck [7.19 h]; GRP (500mm Diameter) - ST - Depth: 2.51m - 3.5m [4.94 m]; GRP (500mm Diameter) - ST - Depth: more than 3.5m [6.18 m] → Skilled labor [7.2 h]; Unskilled Labor [14.4 h]; Equipment Opreator [14.4 h]; Excavator-Poclain [7.2 h]; Dump Truck [7.2 h]; GRP (500mm Diameter) - ST - Depth: 2.51m - 3.5m [4.94 m]; GRP (500mm Diameter) - ST - Depth: more than 3.5m [6.18 m] |
| RHD4CZ5C051ST1301 | Installing for GRP Pipe Line 500 mm - (RD-C-5 /1)-Z5-C051-ST | 2026-08-08 → 2026-08-09 A (+1d) | 2026-08-09 → 2026-08-10 A (+1d) | 0% → 100% | resources Unskilled Labor [14.38 h]; Plumber [7.19 h]; GRP (500mm Diameter) - ST - Depth: 2.51m - 3.5m [39.55 m]; GRP (500mm Diameter) - ST - Depth: more than 3.5m [49.44 m] → Unskilled Labor [14.4 h]; Plumber [7.2 h]; GRP (500mm Diameter) - ST - Depth: 2.51m - 3.5m [39.55 m]; GRP (500mm Diameter) - ST - Depth: more than 3.5m [49.44 m] |
| RHD4CZ5C051ST1401 | Primary Test for GRP Pipe Line 500 mm - (RD-C-5 /1)-Z5-C051-ST | 2026-08-10 A | 2026-08-11 → 2026-09-20 A (+40d) | 0% → 100% | resources Unskilled Labor [7.19 h]; Plumber [7.19 h]; Equipment Opreator [7.19 h]; Water Truck [7.19 h]; GRP (500mm Diameter) - ST - Depth: 2.51m - 3.5m [19.77 m]; GRP (500mm Diameter) - ST - Depth: more than 3.5m [24.72 m] → Unskilled Labor [7.2 h]; Plumber [7.2 h]; Equipment Opreator [7.2 h]; Water Truck [7.2 h]; GRP (500mm Diameter) - ST - Depth: 2.51m - 3.5m [19.77 m]; GRP (500mm Diameter) - ST - Depth: more than 3.5m [24.72 m] |
| RHD4CZ5C051ST1501 | Backfilling and warning tape works for GRP Pipe Line 500 mm - (RD-C-5 /1)-Z5-C051-ST | 2026-08-12 → 2026-08-11 A (-1d) | 2026-08-13 → 2026-08-12 A (-1d) | 0% → 100% | resources Skilled labor [7.19 h]; Unskilled Labor [14.38 h]; Equipment Opreator [14.38 h]; Excavator-Poclain [7.19 h]; Dump Truck [7.19 h]; GRP (500mm Diameter) - ST - Depth: 2.51m - 3.5m [19.77 m]; GRP (500mm Diameter) - ST - Depth: more than 3.5m [24.72 m] → Skilled labor [7.2 h]; Unskilled Labor [14.4 h]; Equipment Opreator [14.4 h]; Excavator-Poclain [7.2 h]; Dump Truck [7.2 h]; GRP (500mm Diameter) - ST - Depth: 2.51m - 3.5m [19.77 m]; GRP (500mm Diameter) - ST - Depth: more than 3.5m [24.72 m] |
| 2994 | **RHD4-02-002-C051-(ST)-UPVC Pipes - 400 mm diameter** |  | 2026-08-10 → 2027-01-31 (+174d) |  |  |
| RHD4CZ5C051ST2101 | Excavation works for UPVC Pipe Line 400 mm - (RD-C-5 /1)-Z5-C051-ST | 2026-07-30 A | 2026-08-01 → 2026-08-05 A (+4d) | 0% → 100% |  |
| RHD4CZ5C051ST2201 | Bedding works for UPVC Pipe Line 400 mm - (RD-C-5 /1)-Z5-C051-ST | 2026-08-02 A | 2026-08-03 → 2026-08-08 A (+5d) | 0% → 100% |  |
| RHD4CZ5C051ST2301 | Installing for UPVC Pipe Line 400 mm - (RD-C-5 /1)-Z5-C051-ST | 2026-08-04 A | 2026-08-05 → 2026-08-10 A (+5d) | 0% → 100% |  |
| RHD4CZ5C051ST2501 | Backfilling and warning tape works for UPVC Pipe Line 400 mm - (RD-C-5 /1)-Z5-C051-ST | 2026-08-09 A | 2026-08-10 → 2026-08-12 A (+2d) | 0% → 100% |  |
| RHD4CZ5C051ST2401 | Primary Test for UPVC Pipe Line 400 mm - (RD-C-5 /1)-Z5-C051-ST | 2026-08-06 → 2027-01-30 (+177d) | 2026-08-08 → 2027-01-31 (+176d) |  |  |
| 3939 | **RHD4-02-002-C051-(ST)-UPVC Pipes - 300 mm diameter** |  | 2026-08-19 → 2027-02-02 (+167d) |  |  |
| RHD4CZ5C051ST2100 | Excavation works for UPVC Pipe Line 300 mm - (RD-C-5 /1)-Z5-C051-ST | 2026-07-30 A | 2026-08-02 → 2026-08-06 A (+4d) | 0% → 100% |  |
| RHD4CZ5C051ST2200 | Bedding works for UPVC Pipe Line 300 mm - (RD-C-5 /1)-Z5-C051-ST | 2026-08-03 A | 2026-08-05 → 2026-08-10 A (+5d) | 0% → 100% |  |
| RHD4CZ5C051ST2300 | Installing for UPVC Pipe Line 300 mm - (RD-C-5 /1)-Z5-C051-ST | 2026-08-11 A | 2026-08-13 A | 0% → 100% |  |
| RHD4CZ5C051ST2500 | Backfilling and warning tape works for UPVC Pipe Line 300 mm - (RD-C-5 /1)-Z5-C051-ST | 2026-08-17 → 2026-08-15 A (-2d) | 2026-08-19 → 2026-08-17 A (-2d) | 0% → 100% |  |
| RHD4CZ5C051ST2400 | Primary Test for UPVC Pipe Line 300 mm - (RD-C-5 /1)-Z5-C051-ST | 2026-08-15 → 2027-02-01 (+170d) | 2026-08-16 → 2027-02-02 (+170d) |  |  |
| 3947 | **RHD4-02-002-C051-(ST)-Concrete Encasement** | 2026-08-12 → 2027-02-01 (+173d) | 2026-08-13 → 2027-02-02 (+173d) |  |  |
| RHD4CZ5C051ST6100 | Pipe Encasement for Storm Pipelines - (RD-C-5 /1)-Z5-C051-ST | 2026-08-12 → 2027-02-01 (+173d) | 2026-08-13 → 2027-02-02 (+173d) |  |  |
| 3948 | **RHD4-02-002-Z5-C051-Catch Basin - ST** | 2026-08-03 → 2026-08-04 (+1d) | 2026-09-02 → 2027-02-20 (+171d) |  |  |
| 3949 | **RHD4-02-002-C051-(ST)-Single Catch Basin Works** | 2026-08-03 → 2026-08-04 (+1d) | 2026-09-02 → 2027-02-20 (+171d) |  |  |
| RHD4CZ5C051ST7100 | Excavation works for Single Catch Basin - (RD-C-5 /1)-Z5-C051-ST | 2026-08-03 → 2026-08-04 A (+1d) | 2026-08-05 → 2026-08-06 A (+1d) | 0% → 100% | resources Skilled labor [31.58 h]; Unskilled Labor [63.16 h]; Equipment Opreator [47.37 h]; Excavator-Poclain [31.58 h]; Dump Truck [15.79 h]; Single Catch basin - ST [7.25 nr] → Skilled labor [31.58 h]; Unskilled Labor [63.2 h]; Equipment Opreator [47.37 h]; Excavator-Poclain [31.58 h]; Dump Truck [15.79 h]; Single Catch basin - ST [7.25 nr] |
| RHD4CZ5C051ST7200 | PC Blinding, Installation and Pipe connection for Single Catch Basin - (RD-C-5 /1)-Z5-C051-ST | 2026-08-06 A | 2026-08-09 A | 0% → 100% | resources Skilled labor [31.58 h]; Unskilled Labor [63.16 h]; Plumber [15.79 h]; Equipment Opreator [6.32 h]; Boom Truck [6.32 h]; Single Catch basin - ST [5.8 nr] → Skilled labor [31.58 h]; Unskilled Labor [63.2 h]; Plumber [15.79 h]; Equipment Opreator [6.32 h]; Boom Truck [6.32 h]; Single Catch basin - ST [5.8 nr] |
| RHD4CZ5C051ST7300 | Rings & C.Slab & Final Backfill for Single Catch Basin - (RD-C-5 /1)-Z5-C051-ST | 2026-08-10 A | 2026-08-13 → 2026-09-22 A (+40d) | 0% → 100% |  |
| RHD4CZ5C051ST7400 | Steel Cover for Single Catch Basin - (RD-C-5 /1)-Z5-C051-ST | 2026-08-15 → 2027-01-30 (+168d) | 2026-08-17 → 2027-02-01 (+168d) |  |  |
| RHD4CZ5C051ST7500 | Finishing and Insulation works for Single Catch Basin - (RD-C-5 /1)-Z5-C051-ST | 2026-08-27 → 2027-02-14 (+171d) | 2026-09-02 → 2027-02-20 (+171d) |  | resources Skilled labor [63.16 h]; Unskilled Labor [126.33 h]; Equipment Opreator [12.63 h]; Boom Truck [12.63 h]; Single Catch basin - ST [4.35 nr] → Skilled labor [63.2 h]; Unskilled Labor [126.33 h]; Equipment Opreator [12.63 h]; Boom Truck [12.63 h]; Single Catch basin - ST [4.35 nr] |
| 6409 | **RHD4-02-002-C051-(ST)-Double Catch Basin Works** | 2026-08-03 → 2026-08-04 (+1d) | 2026-08-13 → 2027-02-02 (+173d) |  |  |
| RHD4CZ5C051ST8100 | Excavation works for Double Catch Basin - (RD-C-5 /1)-Z5-C051-ST | 2026-08-03 → 2026-08-04 A (+1d) | 2026-08-04 → 2026-08-06 A (+2d) | 0% → 100% |  |
| RHD4CZ5C051ST8200 | PC Blinding, Installation and Pipe connection for Double Catch Basin - (RD-C-5 /1)-Z5-C051-ST | 2026-08-05 → 2026-08-06 A (+1d) | 2026-08-06 → 2026-08-09 A (+3d) | 0% → 100% |  |
| RHD4CZ5C051ST8300 | Rings & C.Slab & Final Backfillfor Double Catch Basin - (RD-C-5 /1)-Z5-C051-ST | 2026-08-08 A | 2026-08-09 → 2026-09-20 A (+42d) | 0% → 100% |  |
| RHD4CZ5C051ST8400 | Steel Cover for Double Catch Basin - (RD-C-5 /1)-Z5-C051-ST | 2026-08-10 → 2027-01-30 (+173d) | 2026-08-11 → 2027-01-31 (+173d) |  |  |
| RHD4CZ5C051ST8500 | Finishing and Insulation works for Double Catch Basin - (RD-C-5 /1)-Z5-C051-ST | 2026-08-12 → 2027-02-01 (+173d) | 2026-08-13 → 2027-02-02 (+173d) |  |  |

| ID | Task | Start | Finish | Complete | Other |
| --- | --- | --- | --- | --- | --- |
| 3973 | **RHD4-02-002-Z5-C051-Sewage Network - SW** | 2026-08-27 → 2026-08-08 (-19d) | 2026-10-08 → 2027-03-07 (+150d) |  |  |
| 957 | **RHD4-02-002-C051-(SW)-MH Works - 1200 mm diameter with Back drop** | 2026-08-27 → 2026-08-09 (-18d) | 2026-09-07 → 2027-02-20 (+166d) |  |  |
| RHD4CZ5C051SW3101 | Excavation and PC Blinding works for MH 1200 mm - (RD-C-5 /1)-Z5-C051-SW | 2026-08-27 → 2026-08-09 A (-18d) | 2026-08-29 → 2026-08-10 A (-19d) | 0% → 100% |  |
| RHD4CZ5C051SW3201 | Installation of Base for MH 1200 mm - (RD-C-5 /1)-Z5-C051-SW | 2026-08-30 → 2026-08-12 A (-18d) | 2026-08-31 → 2026-08-13 A (-18d) | 0% → 100% |  |
| RHD4CZ5C051SW3301 | MH Ring and C.Slab works and Backfilling works for MH 1200 mm - (RD-C-5 /1)-Z5-C051-SW | 2026-09-01 → 2027-02-14 (+166d) | 2026-09-02 → 2027-02-15 (+166d) |  | resources Skilled labor [5.45 h]; Unskilled Labor [5.45 h]; Equipment Opreator [3.81 h]; Boom Truck [2.18 h]; Concrete Mixer Truck [1.63 h]; MH (1200mm Diameter) - SW - depth 2.51- 3.5 m with back drop [0.35 nr] → Skilled labor [5.45 h]; Unskilled Labor [5.45 h]; Equipment Opreator [3.81 h]; Boom Truck [2.18 h]; Concrete Mixer Truck [1.6 h]; MH (1200mm Diameter) - SW - depth 2.51- 3.5 m with back drop [0.35 nr] |
| RHD4CZ5C051SW3401 | Steel Cover for MH 1200 mm - (RD-C-5 /1)-Z5-C051-SW | 2026-09-03 → 2027-02-16 (+166d) | 2026-09-05 → 2027-02-17 (+165d) |  | resources Skilled labor [3.59 h]; Unskilled Labor [7.3 h]; Equipment Opreator [0.76 h]; Boom Truck [0.76 h]; MH (1200mm Diameter) - SW - depth 2.51- 3.5 m with back drop [0.05 nr] → Skilled labor [3.59 h]; Unskilled Labor [7.3 h]; Equipment Opreator [0.8 h]; Boom Truck [0.8 h]; MH (1200mm Diameter) - SW - depth 2.51- 3.5 m with back drop [0.05 nr] |
| RHD4CZ5C051SW3501 | Finishing, Benching, Testing works for MH 1200 mm - (RD-C-5 /1)-Z5-C051-SW | 2026-09-06 → 2027-02-18 (+165d) | 2026-09-07 → 2027-02-20 (+166d) |  |  |
| 3794 | **RHD4-02-002-C051-(SW)-MH Works - 1200 mm diameter** | 2026-09-03 → 2026-08-09 (-25d) | 2026-10-08 → 2027-03-07 (+150d) |  |  |
| RHD4CZ5C051SW3100 | Excavation and PC Blinding works for MH 1200 mm - (RD-C-5 /1)-Z5-C051-SW | 2026-09-03 → 2026-08-09 A (-25d) | 2026-09-08 → 2026-08-10 A (-29d) | 0% → 100% | resources Skilled labor [54.45 h]; Unskilled Labor [54.45 h]; Equipment Opreator [87.12 h]; Excavator-Poclain [54.45 h]; Water Truck [5.45 h]; Dump Truck [27.23 h]; MH (1200mm Diameter) - SW - depth 1.51 - 2.5m [1.5 nr]; MH (1200mm Diameter) - SW - depth 2.51 - 3.5m [0.5 nr]; MH (1200mm Diameter) - SW - depth 3.51 -4.5m [0.5 nr] → Skilled labor [54.45 h]; Unskilled Labor [54.45 h]; Equipment Opreator [87.12 h]; Excavator-Poclain [54.45 h]; Water Truck [5.45 h]; Dump Truck [27.2 h]; MH (1200mm Diameter) - SW - depth 1.51 - 2.5m [1.5 nr]; MH (1200mm Diameter) - SW - depth 2.51 - 3.5m [0.5 nr]; MH (1200mm Diameter) - SW - depth 3.51 -4.5m [0.5 nr] |
| RHD4CZ5C051SW3200 | Installation of Base for MH 1200 mm - (RD-C-5 /1)-Z5-C051-SW | 2026-09-09 → 2026-08-11 A (-29d) | 2026-09-16 → 2026-08-12 A (-35d) | 0% → 100% |  |
| RHD4CZ5C051SW3300 | MH Ring and C.Slab works and Backfilling works for MH 1200 mm - (RD-C-5 /1)-Z5-C051-SW | 2026-09-17 → 2027-02-14 (+150d) | 2026-09-26 → 2027-02-21 (+148d) |  |  |
| RHD4CZ5C051SW3400 | Steel Cover for MH 1200 mm - (RD-C-5 /1)-Z5-C051-SW | 2026-09-27 → 2027-02-23 (+149d) | 2026-09-30 → 2027-02-27 (+150d) |  |  |
| RHD4CZ5C051SW3500 | Finishing, Benching, Testing works for MH 1200 mm - (RD-C-5 /1)-Z5-C051-SW | 2026-10-01 → 2027-02-28 (+150d) | 2026-10-08 → 2027-03-07 (+150d) |  |  |
| 3979 | **RHD4-02-002-C051-(SW)-UPVC Pipes - 200 mm diameter** | 2026-08-30 → 2026-08-08 (-22d) |  |  |  |
| RHD4CZ5C051SW2100 | Excavation works for UPVC Pipe Line 200 mm - (RD-C-5 /1)-Z5-C051-SW | 2026-08-30 → 2026-08-08 A (-22d) | 2026-09-02 → 2026-08-11 A (-22d) | 0% → 100% | resources Skilled labor [34.41 h]; Unskilled Labor [34.41 h]; Equipment Opreator [41.27 h]; Excavator-Poclain [34.41 h]; Dump Truck [6.86 h]; UPVC (200mm Diameter) - SW - Depth: less than 1.5m [29.67 m]; UPVC (200mm Diameter) - SW - Depth: 1.51m - 2.5m [14.69 m]; UPVC (200mm Diameter) - SW - Depth: 2.51m - 3.5m [26.97 m] → Skilled labor [34.4 h]; Unskilled Labor [34.4 h]; Equipment Opreator [41.27 h]; Excavator-Poclain [34.4 h]; Dump Truck [6.86 h]; UPVC (200mm Diameter) - SW - Depth: less than 1.5m [29.67 m]; UPVC (200mm Diameter) - SW - Depth: 1.51m - 2.5m [14.69 m]; UPVC (200mm Diameter) - SW - Depth: 2.51m - 3.5m [26.97 m] |
| RHD4CZ5C051SW2200 | Bedding works for UPVC Pipe Line 200 mm - (RD-C-5 /1)-Z5-C051-SW | 2026-09-03 → 2026-08-12 A (-22d) | 2026-09-07 → 2026-08-14 A (-24d) | 0% → 100% |  |
| RHD4CZ5C051SW2300 | Installing for UPVC Pipe Line 200 mm - (RD-C-5 /1)-Z5-C051-SW | 2026-09-08 → 2026-08-15 A (-24d) | 2026-09-12 → 2026-08-18 A (-25d) | 0% → 100% | resources Unskilled Labor [74.38 h]; Plumber [37.14 h]; Equipment Opreator [37.14 h]; Boom Truck [37.14 h]; UPVC (200mm Diameter) - SW - Depth: less than 1.5m [133.54 m]; UPVC (200mm Diameter) - SW - Depth: 1.51m - 2.5m [39.17 m]; UPVC (200mm Diameter) - SW - Depth: 2.51m - 3.5m [71.91 m] → Unskilled Labor [74.4 h]; Plumber [37.14 h]; Equipment Opreator [37.14 h]; Boom Truck [37.14 h]; UPVC (200mm Diameter) - SW - Depth: less than 1.5m [133.54 m]; UPVC (200mm Diameter) - SW - Depth: 1.51m - 2.5m [39.17 m]; UPVC (200mm Diameter) - SW - Depth: 2.51m - 3.5m [71.91 m] |
| RHD4CZ5C051SW2500 | Backfilling and warning tape works for UPVC Pipe Line 200 mm - (RD-C-5 /1)-Z5-C051-SW | 2026-09-16 → 2026-08-17 A (-30d) | 2026-09-20 → 2026-08-22 A (-29d) | 0% → 100% |  |
| RHD4CZ5C051SW2400 | Primary Test for UPVC Pipe Line 200 mm - (RD-C-5 /1)-Z5-C051-SW | 2026-09-13 A | 2026-09-15 → 2026-09-20 A (+5d) | 0% → 100% |  |
| 4010 | **RHD4-02-002-Z5-C051-Potable Network - PT** | 2026-09-21 → 2026-08-04 (-48d) | 2026-10-24 → 2027-03-21 (+148d) |  |  |
| 4011 | **RHD4-02-002-C051-(PT)-HDPE Pipes - 110 mm diameter** | 2026-10-10 → 2026-08-04 (-67d) | 2026-10-20 → 2027-03-15 (+146d) |  |  |
| RHD4CZ5C051PT1100 | Excavation works for HDPE Pipline 110 mm - (RD-C-5 /1)-Z5-C051-PT | 2026-10-10 → 2026-08-04 A (-67d) | 2026-10-11 → 2026-08-05 A (-67d) | 0% → 100% |  |
| RHD4CZ5C051PT1200 | Bedding works for HDPE Pipline 110 mm - (RD-C-5 /1)-Z5-C051-PT | 2026-10-12 → 2026-08-06 A (-67d) | 2026-10-13 → 2026-08-08 A (-66d) | 0% → 100% |  |
| RHD4CZ5C051PT1300 | Installing for HDPE Pipline 110 mm - (RD-C-5 /1)-Z5-C051-PT | 2026-10-14 → 2026-08-08 A (-67d) | 2026-10-15 → 2026-08-09 A (-67d) | 0% → 100% |  |
| RHD4CZ5C051PT1400 | Primary Test for HDPE Pipline 110 mm - (RD-C-5 /1)-Z5-C051-PT | 2026-10-17 → 2027-03-08 (+142d) | 2026-10-18 → 2027-03-13 (+146d) |  |  |
| RHD4CZ5C051PT1500 | Backfilling and warning tape works for HDPE Pipline 110 mm - (RD-C-5 /1)-Z5-C051-PT | 2026-10-19 → 2027-03-14 (+146d) | 2026-10-20 → 2027-03-15 (+146d) |  | resources Skilled labor [5.55 h]; Unskilled Labor [11.22 h]; Equipment Opreator [11.22 h]; Excavator-Poclain [5.55 h]; Dump Truck [5.55 h]; HDPE (110mm Diameter) - PT - Depth: less than 1.5m [20.52 m] → Skilled labor [5.55 h]; Unskilled Labor [11.2 h]; Equipment Opreator [11.2 h]; Excavator-Poclain [5.55 h]; Dump Truck [5.55 h]; HDPE (110mm Diameter) - PT - Depth: less than 1.5m [20.52 m] |
| 4012 | **RHD4-02-002-C051-(PT)-HDPE Pipes - 160 mm diameter** | 2026-09-21 → 2026-08-04 (-48d) | 2026-10-21 → 2027-03-18 (+148d) |  |  |
| RHD4CZ5C051PT1101 | Excavation works for HDPE Pipline 160 mm - (RD-C-5 /1)-Z5-C051-PT | 2026-09-21 → 2026-08-04 A (-48d) | 2026-09-22 → 2027-02-15 (+146d) | 0% → 20% | resources Skilled labor [17.97 h]; Unskilled Labor [17.97 h]; Equipment Opreator [21.56 h]; Excavator-Poclain [17.97 h]; Dump Truck [3.59 h]; HDPE (160mm Diameter) - PT - Depth: less than 1.5m [41.19 m] → Skilled labor [17.97 h]; Unskilled Labor [17.97 h]; Equipment Opreator [21.6 h]; Excavator-Poclain [17.97 h]; Dump Truck [3.59 h]; HDPE (160mm Diameter) - PT - Depth: less than 1.5m [41.19 m] |
| RHD4CZ5C051PT1201 | Bedding works for HDPE Pipline 160 mm - (RD-C-5 /1)-Z5-C051-PT | 2026-09-24 → 2026-08-06 A (-49d) | 2026-09-26 → 2027-02-17 (+144d) | 0% → 20% |  |
| RHD4CZ5C051PT1301 | Installing for HDPE Pipline 160 mm - (RD-C-5 /1)-Z5-C051-PT | 2026-09-27 → 2026-08-08 A (-50d) | 2026-09-29 → 2027-02-21 (+145d) | 0% → 20% |  |
| RHD4CZ5C051PT1401 | Primary Test for HDPE Pipline 160 mm - (RD-C-5 /1)-Z5-C051-PT | 2026-10-17 → 2027-03-14 (+148d) | 2026-10-18 → 2027-03-15 (+148d) |  |  |
| RHD4CZ5C051PT1501 | Backfilling and warning tape works for HDPE Pipline 160 mm - (RD-C-5 /1)-Z5-C051-PT | 2026-10-19 → 2027-03-16 (+148d) | 2026-10-21 → 2027-03-18 (+148d) |  | resources Skilled labor [22.43 h]; Unskilled Labor [44.87 h]; Equipment Opreator [44.87 h]; Excavator-Poclain [22.43 h]; Dump Truck [22.43 h]; HDPE (160mm Diameter) - PT - Depth: less than 1.5m [82.38 m] → Skilled labor [22.4 h]; Unskilled Labor [44.87 h]; Equipment Opreator [44.87 h]; Excavator-Poclain [22.4 h]; Dump Truck [22.4 h]; HDPE (160mm Diameter) - PT - Depth: less than 1.5m [82.38 m] |
| 4016 | **RHD4-02-002-C051-(PT)-Gate Valves (Direct Buried)** | 2026-10-14 → 2027-03-08 (+145d) | 2026-10-24 → 2027-03-21 (+148d) |  |  |
| RHD4CZ5C051PT3100 | Installation for Direct Buried Gate Valves - (RD-C-5 /1)-Z5-C051-PT | 2026-10-14 → 2027-03-08 (+145d) | 2026-10-15 → 2027-03-13 (+149d) |  |  |
| RHD4CZ5C051PT3200 | Stem and Service box for Direct Buried Gate Valves - (RD-C-5 /1)-Z5-C051-PT | 2026-10-22 → 2027-03-20 (+149d) | 2026-10-24 → 2027-03-21 (+148d) |  |  |
| 4025 | **RHD4-02-002-Z5-C051-Irrigation Network - IRR** | 2026-10-21 → 2027-03-16 (+146d) | 2026-11-17 → 2027-04-12 (+146d) |  |  |
| 4026 | **RHD4-02-002-C051-(IRR)-HDPE Pipes - 160 mm diameter** | 2026-10-21 → 2027-03-16 (+146d) | 2026-11-10 → 2027-04-05 (+146d) |  |  |
| RHD4CZ5C051IRR1100 | Excavation works for HDPE Pipline 160 mm - (RD-C-5 /1)-Z5-C051-IRR | 2026-10-21 → 2027-03-16 (+146d) | 2026-10-25 → 2027-03-20 (+146d) |  |  |
| RHD4CZ5C051IRR1200 | Bedding works for HDPE Pipline 160 mm - (RD-C-5 /1)-Z5-C051-IRR | 2026-10-26 → 2027-03-21 (+146d) | 2026-10-29 → 2027-03-24 (+146d) |  |  |
| RHD4CZ5C051IRR1300 | Installing for HDPE Pipline 160 mm - (RD-C-5 /1)-Z5-C051-IRR | 2026-10-31 → 2027-03-25 (+145d) | 2026-11-03 → 2027-03-29 (+146d) |  |  |
| RHD4CZ5C051IRR1400 | Primary Test for HDPE Pipline 160 mm - (RD-C-5 /1)-Z5-C051-IRR | 2026-11-04 → 2027-03-30 (+146d) | 2026-11-05 → 2027-03-31 (+146d) |  |  |
| RHD4CZ5C051IRR1500 | Backfilling and warning tape works for HDPE Pipline 160 mm - (RD-C-5 /1)-Z5-C051-IRR | 2026-11-07 → 2027-04-01 (+145d) | 2026-11-10 → 2027-04-05 (+146d) |  |  |
| 4034 | **RHD4-02-002-C051-(IRR)-Gate Valves (Direct Buried)** | 2026-11-02 → 2027-03-28 (+146d) | 2026-11-12 → 2027-04-07 (+146d) |  |  |
| RHD4CZ5C051IRR3100 | Installation for Direct Buried Gate Valves - (RD-C-5 /1)-Z5-C051-IRR | 2026-11-02 → 2027-03-28 (+146d) | 2026-11-03 → 2027-03-29 (+146d) |  |  |
| RHD4CZ5C051IRR3200 | Stem and Service box for Direct Buried Gate Valves - (RD-C-5 /1)-Z5-C051-IRR | 2026-11-11 → 2027-04-06 (+146d) | 2026-11-12 → 2027-04-07 (+146d) |  |  |
| 4037 | **RHD4-02-002-C051-(IRR)-Wash out Chamber** | 2026-11-04 → 2027-03-30 (+146d) | 2026-11-12 → 2027-04-07 (+146d) |  |  |
| RHD4CZ5C051IRR2101 | Excavation and Bedding for Wash out Chamber for Irrigation Network - (RD-C-5 /1)-Z5-C051-IRR | 2026-11-04 → 2027-03-30 (+146d) | 2026-11-05 → 2027-03-31 (+146d) |  |  |
| RHD4CZ5C051IRR2201 | PC works for Wash out Chamber for Irrigation Network - (RD-C-5 /1)-Z5-C051-IRR | 2026-11-07 → 2027-04-01 (+145d) | 2026-11-08 → 2027-04-03 (+146d) |  |  |
| RHD4CZ5C051IRR2301 | Installation for Wash out Chamber for Irrigation Network - (RD-C-5 /1)-Z5-C051-IRR | 2026-11-09 → 2027-04-04 (+146d) | 2026-11-10 → 2027-04-05 (+146d) |  |  |
| RHD4CZ5C051IRR2401 | Backfilling works for Wash out Chamber for Irrigation Network - (RD-C-5 /1)-Z5-C051-IRR | 2026-11-11 → 2027-04-06 (+146d) | 2026-11-12 → 2027-04-07 (+146d) |  |  |
| 4038 | **RHD4-02-002-C051-(IRR)-Wash out Valves** | 2026-11-11 → 2027-04-06 (+146d) | 2026-11-15 → 2027-04-10 (+146d) |  |  |
| RHD4CZ5C051IRR3102 | Installation for Wash out Valve for Irrigation Network - (RD-C-5 /1)-Z5-C051-IRR | 2026-11-11 → 2027-04-06 (+146d) | 2026-11-12 → 2027-04-07 (+146d) |  |  |
| RHD4CZ5C051IRR3202 | Stem and Service box for Wash out Valve for Irrigation Network - (RD-C-5 /1)-Z5-C051-IRR | 2026-11-14 → 2027-04-08 (+145d) | 2026-11-15 → 2027-04-10 (+146d) |  |  |
| 4039 | **RHD4-02-002-C051-(IRR)-Air Valve Chamber** | 2026-11-04 → 2027-03-30 (+146d) | 2026-11-12 → 2027-04-07 (+146d) |  |  |
| RHD4CZ5C051IRR2102 | Excavation and Bedding for Valve Chamber for Irrigation Network - (RD-C-5 /1)-Z5-C051-IRR | 2026-11-04 → 2027-03-30 (+146d) | 2026-11-05 → 2027-03-31 (+146d) |  |  |
| RHD4CZ5C051IRR2202 | PC works for Valve Chamber for Irrigation Network - (RD-C-5 /1)-Z5-C051-IRR | 2026-11-07 → 2027-04-01 (+145d) | 2026-11-08 → 2027-04-03 (+146d) |  |  |
| RHD4CZ5C051IRR2302 | Installation for Valve Chamber for Irrigation Network - (RD-C-5 /1)-Z5-C051-IRR | 2026-11-09 → 2027-04-04 (+146d) | 2026-11-10 → 2027-04-05 (+146d) |  |  |
| RHD4CZ5C051IRR2402 | Backfilling works for Valve Chamber for Irrigation Network - (RD-C-5 /1)-Z5-C051-IRR | 2026-11-11 → 2027-04-06 (+146d) | 2026-11-12 → 2027-04-07 (+146d) |  |  |
| 4040 | **RHD4-02-002-C051-(IRR)-Air Valves** | 2026-11-11 → 2027-04-06 (+146d) | 2026-11-17 → 2027-04-12 (+146d) |  |  |
| RHD4CZ5C051IRR3103 | Installation for Air Valves for Irrigation Network - (RD-C-5 /1)-Z5-C051-IRR | 2026-11-11 → 2027-04-06 (+146d) | 2026-11-12 → 2027-04-07 (+146d) |  |  |
| RHD4CZ5C051IRR3203 | Stem and Service box for Air Valves for Irrigation Network - (RD-C-5 /1)-Z5-C051-IRR | 2026-11-16 → 2027-04-11 (+146d) | 2026-11-17 → 2027-04-12 (+146d) |  |  |
| 4041 | **RHD4-02-002-C051-(IRR)-Concrete Encasement** | 2026-11-02 → 2027-03-28 (+146d) | 2026-11-03 → 2027-03-29 (+146d) |  |  |
| RHD4CZ5C051IRR5100 | Pipe Encasement for Irrigation Pipelines - (RD-C-5 /1)-Z5-C051-IRR | 2026-11-02 → 2027-03-28 (+146d) | 2026-11-03 → 2027-03-29 (+146d) |  | resources Skilled labor [16.01 h]; Unskilled Labor [16.01 h]; Equipment Opreator [17.53 h]; Concrete Mixer Truck [1.63 h]; Dump Truck [16.01 h]; Pipe Encasement - TSE [7.33 m3] → Skilled labor [16 h]; Unskilled Labor [16 h]; Equipment Opreator [17.53 h]; Concrete Mixer Truck [1.6 h]; Dump Truck [16 h]; Pipe Encasement - TSE [7.33 m3] |
| 4059 | **RHD4-02-002-Z5-C051-Medium Voltage Network - MV** | 2026-12-19 → 2026-08-04 (-137d) | 2027-01-09 → 2027-07-01 (+173d) |  |  |
| 4060 | **RHD4-02-002-C051-(MV)-Medium Voltage cable trench** | 2026-12-19 → 2027-06-17 (+180d) | 2026-12-30 → 2027-06-29 (+181d) |  |  |
| RHD4CZ5C051MV1100 | Excavation for Medium Voltage Trench - (RD-C-5 /1)-Z5-C051-MV | 2026-12-19 → 2027-06-17 (+180d) | 2026-12-20 → 2027-06-19 (+181d) |  |  |
| RHD4CZ5C051MV1200 | Trench Backfilling for Medium Voltage Network - (RD-C-5 /1)-Z5-C051-MV | 2026-12-29 → 2027-06-28 (+181d) | 2026-12-30 → 2027-06-29 (+181d) |  |  |
| 4061 | **RHD4-02-002-C051-(MV)-Medium Voltage duct banks** | 2026-12-31 → 2026-08-04 (-149d) | 2027-01-09 → 2026-08-12 (-150d) |  |  |
| RHD4CZ5C051MV2100 | Excavation of Duct Banks for Medium Voltage Network - (RD-C-5 /1)-Z5-C051-MV | 2026-12-31 → 2026-08-04 A (-149d) | 2027-01-02 → 2026-08-05 A (-150d) | 0% → 100% |  |
| RHD4CZ5C051MV2200 | Installation of Duct Banks for Medium Voltage Network - (RD-C-5 /1)-Z5-C051-MV | 2027-01-03 → 2026-08-06 A (-150d) | 2027-01-04 → 2026-08-08 A (-149d) | 0% → 100% |  |

| ID | Task | Start | Finish | Complete |
| --- | --- | --- | --- | --- |
| RHD4CZ5C051MV2300 | Pouring of Duct Banks for Medium Voltage Network - (RD-C-5 /1)-Z5-C051-MV | 2027-01-05 → 2026-08-09 A (-149d) | 2027-01-06 → 2026-08-10 A (-149d) | 0% → 100% |
| RHD4CZ5C051MV2400 | Backfilling of Duct Banks for Medium Voltage Network - (RD-C-5 /1)-Z5-C051-MV | 2027-01-07 → 2026-08-11 A (-149d) | 2027-01-09 → 2026-08-12 A (-150d) | 0% → 100% |
| 4062 | **RHD4-02-002-C051-(MV)-Medium Voltage cables 3Cx 500 mm²** | 2026-12-21 → 2027-06-20 (+181d) | 2027-01-02 → 2027-07-01 (+180d) |  |
| RHD4CZ5C051MV3100 | Installation of Medium Voltage Cables 3Cx 500 mm² - (RD-C-5 /1)-Z5-C051-MV | 2026-12-21 → 2027-06-20 (+181d) | 2026-12-26 → 2027-06-24 (+180d) |  |
| RHD4CZ5C051MV3200 | Joints Installation of Medium Voltage Cables 3Cx 500 mm² - (RD-C-5 /1)-Z5-C051-MV | 2026-12-27 → 2027-06-26 (+181d) | 2026-12-28 → 2027-06-27 (+181d) |  |
| RHD4CZ5C051MV3300 | Testing of Medium Voltage Cables 3Cx 500 mm² - (RD-C-5 /1)-Z5-C051-MV | 2026-12-31 → 2027-06-30 (+181d) | 2027-01-02 → 2027-07-01 (+180d) |  |
| 4066 | **RHD4-02-002-Z5-C051-Low Voltage Network - LV** | 2026-11-18 → 2026-08-04 (-106d) | 2026-12-31 → 2027-06-09 (+160d) |  |
| 4067 | **RHD4-02-002-C051-(LV)-Low Voltage duct banks** | 2026-11-18 → 2026-08-04 (-106d) | 2026-12-03 → 2026-08-13 (-112d) |  |
| RHD4CZ5C051LV2100 | Excavation of Duct Banks for Low Voltage Network - (RD-C-5 /1)-Z5-C051-LV | 2026-11-18 → 2026-08-04 A (-106d) | 2026-11-21 → 2026-08-06 A (-107d) | 0% → 100% |
| RHD4CZ5C051LV2200 | Installation of Duct Banks for Low Voltage Network - (RD-C-5 /1)-Z5-C051-LV | 2026-11-22 → 2026-08-06 A (-108d) | 2026-11-26 → 2026-08-11 A (-107d) | 0% → 100% |
| RHD4CZ5C051LV2300 | Pouring of Duct Banks for Low Voltage Network - (RD-C-5 /1)-Z5-C051-LV | 2026-11-28 → 2026-08-09 A (-111d) | 2026-11-30 → 2026-08-11 A (-111d) | 0% → 100% |
| RHD4CZ5C051LV2400 | Backfilling of Duct Banks for Low Voltage Network - (RD-C-5 /1)-Z5-C051-LV | 2026-12-01 → 2026-08-11 A (-112d) | 2026-12-03 → 2026-08-13 A (-112d) | 0% → 100% |
| 4068 | **RHD4-02-002-C051-(LV)-Low Voltage Drawpit** | 2026-12-01 → 2027-05-05 (+155d) | 2026-12-05 → 2027-05-09 (+155d) |  |
| RHD4CZ5C051LV5100 | Excavation of Drawpit size 900x900x1000mm for Low Voltage Network - (RD-C-5 /1)-Z5-C051-LV | 2026-12-01 → 2027-05-05 (+155d) | 2026-12-02 → 2027-05-06 (+155d) |  |
| RHD4CZ5C051LV5200 | Installation of Drawpit size 900x900x1000mm for Low Voltage Network - (RD-C-5 /1)-Z5-C051-LV | 2026-12-03 → 2027-05-08 (+156d) | 2026-12-05 → 2027-05-09 (+155d) |  |
| 4069 | **RHD4-02-002-C051-(LV)-Low Voltage cables** | 2026-12-06 → 2027-05-10 (+155d) | 2026-12-31 → 2027-06-09 (+160d) |  |
| RHD4CZ5C051LV3100 | Excavation for Low Voltage Cables for Low Voltage Network - (RD-C-5 /1)-Z5-C051-LV | 2026-12-06 → 2027-05-10 (+155d) | 2026-12-13 → 2027-05-22 (+160d) |  |
| RHD4CZ5C051LV3200 | Cable Laying of Low Voltage Cables for Low Voltage Network - (RD-C-5 /1)-Z5-C051-LV | 2026-12-14 → 2027-05-23 (+160d) | 2026-12-20 → 2027-05-29 (+160d) |  |
| RHD4CZ5C051LV3300 | Warning tape and Backfill for Low Voltage Cables for Low Voltage Network - (RD-C-5 /1)-Z5-C051-LV | 2026-12-21 → 2027-05-30 (+160d) | 2026-12-27 → 2027-06-05 (+160d) |  |
| RHD4CZ5C051LV3400 | Testing of Low Voltage Cables for Low Voltage Network - (RD-C-5 /1)-Z5-C051-LV | 2026-12-28 → 2027-06-06 (+160d) | 2026-12-31 → 2027-06-09 (+160d) |  |
| 4072 | **RHD4-02-002-Z5-C051-Street Lighting Network - SL** | 2027-01-02 → 2027-06-10 (+159d) | 2027-01-31 → 2027-07-10 (+160d) |  |
| 4075 | **RHD4-02-002-C051-(SL)-Street Lighting cables** | 2027-01-02 → 2027-06-10 (+159d) | 2027-01-14 → 2027-06-23 (+160d) |  |
| RHD4CZ5C051SL3100 | Excavation for Street Lighting Cables for Street Lighting Network - (RD-C-5 /1)-Z5-C051-SL | 2027-01-02 → 2027-06-10 (+159d) | 2027-01-05 → 2027-06-14 (+160d) |  |
| RHD4CZ5C051SL3200 | Cable Laying of Street Lighting Cables for Street Lighting Network - (RD-C-5 /1)-Z5-C051-SL | 2027-01-06 → 2027-06-15 (+160d) | 2027-01-09 → 2027-06-17 (+159d) |  |
| RHD4CZ5C051SL3300 | Warning tape and Backfill for Street Lighting Cables for Street Lighting Network - (RD-C-5 /1)-Z5-C051-SL | 2027-01-10 → 2027-06-19 (+160d) | 2027-01-12 → 2027-06-21 (+160d) |  |
| RHD4CZ5C051SL3400 | Testing of Street Lighting Cables for Street Lighting Network - (RD-C-5 /1)-Z5-C051-SL | 2027-01-13 → 2027-06-22 (+160d) | 2027-01-14 → 2027-06-23 (+160d) |  |
| 4076 | **RHD4-02-002-C051-(SL)-Street Lighting Poles** | 2027-01-16 → 2027-06-24 (+159d) | 2027-01-31 → 2027-07-10 (+160d) |  |
| RHD4CZ5C051SL1100 | Excavation for RC Base for Lighting Poles for Street Lighting Network - (RD-C-5 /1)-Z5-C051-SL | 2027-01-16 → 2027-06-24 (+159d) | 2027-01-17 → 2027-06-26 (+160d) |  |
| RHD4CZ5C051SL1200 | Installation for RC Base for Lighting Poles for Street Lighting Network - (RD-C-5 /1)-Z5-C051-SL | 2027-01-18 → 2027-06-27 (+160d) | 2027-01-19 → 2027-06-28 (+160d) |  |
| RHD4CZ5C051SL1300 | Backfill for RC Base for Lighting Poles for Street Lighting Network - (RD-C-5 /1)-Z5-C051-SL | 2027-01-20 → 2027-06-29 (+160d) | 2027-01-21 → 2027-06-30 (+160d) |  |
| RHD4CZ5C051SL1400 | Installation for Lighting Poles for Street Lighting Network - (RD-C-5 /1)-Z5-C051-SL | 2027-01-23 → 2027-07-01 (+159d) | 2027-01-25 → 2027-07-04 (+160d) |  |
| RHD4CZ5C051SL1500 | Luminaire Installation for Lighting Poles for Street Lighting Network - (RD-C-5 /1)-Z5-C051-SL | 2027-01-28 → 2027-07-07 (+160d) | 2027-01-31 → 2027-07-10 (+160d) |  |
| 4078 | **RHD4-02-002-C051-(SL)-Street Lighting Earthing System** | 2027-01-26 → 2027-07-05 (+160d) | 2027-01-27 → 2027-07-06 (+160d) |  |
| RHD4CZ5C051SL6100 | Installation of Earthing for Lighting Poles and Fedder Pillers for Street Lighting Network - (RD-C-5 /1)-Z5-C051-SL | 2027-01-26 → 2027-07-05 (+160d) | 2027-01-27 → 2027-07-06 (+160d) |  |
| 4084 | **RHD4-02-002-Z5-C051-Telecommunications Network - TC** |  | 2027-03-17 → 2027-08-19 (+155d) |  |
| 4085 | **RHD4-02-002-C051-(TC)-Telecommunications Ducts** | 2027-02-01 → 2027-07-11 (+160d) | 2027-03-04 → 2027-08-10 (+159d) |  |
| RHD4CZ5C051TC2100 | Excavation of HDPE Ducts for Telecom Network - (RD-C-5 /1)-Z5-C051-TC | 2027-02-01 → 2027-07-11 (+160d) | 2027-02-09 → 2027-07-19 (+160d) |  |
| RHD4CZ5C051TC2200 | Installation of HDPE Ducts for Telecom Network - (RD-C-5 /1)-Z5-C051-TC | 2027-02-10 → 2027-07-20 (+160d) | 2027-02-23 → 2027-08-01 (+159d) |  |
| RHD4CZ5C051TC2400 | Backfilling of HDPE Ducts for Telecom Network - (RD-C-5 /1)-Z5-C051-TC | 2027-02-24 → 2027-08-02 (+159d) | 2027-03-04 → 2027-08-10 (+159d) |  |
| 4086 | **RHD4-02-002-C051-(TC)-Telecommunications Manholes** | 2027-03-06 → 2027-08-11 (+158d) | 2027-03-17 → 2027-08-19 (+155d) |  |
| RHD4CZ5C051TC5100 | Excavation for Manholes for Telecom Network - (RD-C-5 /1)-Z5-C051-TC | 2027-03-06 → 2027-08-11 (+158d) | 2027-03-13 → 2027-08-15 (+155d) |  |
| RHD4CZ5C051TC5200 | Installation of Manholes for Telecom Network - (RD-C-5 /1)-Z5-C051-TC | 2027-03-14 → 2027-08-16 (+155d) | 2027-03-17 → 2027-08-19 (+155d) |  |
| 4087 | **RHD4-02-002-C051-(TC)-Telecomminications Road Crossings** |  | 2026-08-05 → 2026-08-12 (+7d) |  |
| RHD4CZ5C051TC3100 | Excavation for Road Crossings for Telecom Network - (RD-C-5 /1)-Z5-C051-TC | 2026-07-28 A | 2026-07-29 → 2026-08-05 A (+7d) | 0% → 100% |
| RHD4CZ5C051TC3200 | Installation of Road Crossings for Telecom Network - (RD-C-5 /1)-Z5-C051-TC | 2026-07-30 A | 2026-08-01 → 2026-08-08 A (+7d) | 0% → 100% |
| RHD4CZ5C051TC3300 | Pouring of Road Crossings for Telecom Network - (RD-C-5 /1)-Z5-C051-TC | 2026-08-02 A | 2026-08-03 → 2026-08-10 A (+7d) | 0% → 100% |
| RHD4CZ5C051TC3400 | Backfilling of Road Crossings for Telecom Network - (RD-C-5 /1)-Z5-C051-TC | 2026-08-04 A | 2026-08-05 → 2026-08-12 A (+7d) | 0% → 100% |
| 4088 | **RHD4-02-002-Z5-C051-Information and Communication Technologies - ICT** |  | 2027-04-14 → 2027-09-16 (+155d) |  |
| 4089 | **RHD4-02-002-C051-(ICT)-Information and Communication Technologies Ducts** | 2027-03-18 → 2027-08-21 (+156d) | 2027-04-14 → 2027-09-16 (+155d) |  |
| RHD4CZ5C051ICT2100 | Excavation of HDPE Ducts for ICT Network - (RD-C-5 /1)-Z5-C051-ICT | 2027-03-18 → 2027-08-21 (+156d) | 2027-03-25 → 2027-08-28 (+156d) |  |
| RHD4CZ5C051ICT2200 | Installation of HDPE Ducts for ICT Network - (RD-C-5 /1)-Z5-C051-ICT | 2027-03-27 → 2027-08-29 (+155d) | 2027-04-06 → 2027-09-08 (+155d) |  |
| RHD4CZ5C051ICT2400 | Backfilling of HDPE Ducts for ICT Network - (RD-C-5 /1)-Z5-C051-ICT | 2027-04-07 → 2027-09-09 (+155d) | 2027-04-14 → 2027-09-16 (+155d) |  |
| 4090 | **RHD4-02-002-C051-(ICT)-Information and Communication Technologies Manholes** | 2027-03-27 → 2027-08-29 (+155d) | 2027-04-01 → 2027-09-04 (+156d) |  |
| RHD4CZ5C051ICT5100 | Excavation for Manholes for ICT Network - (RD-C-5 /1)-Z5-C051-ICT | 2027-03-27 → 2027-08-29 (+155d) | 2027-03-29 → 2027-08-31 (+155d) |  |
| RHD4CZ5C051ICT5200 | Installation of Manholes for ICT Network - (RD-C-5 /1)-Z5-C051-ICT | 2027-03-30 → 2027-09-01 (+155d) | 2027-04-01 → 2027-09-04 (+156d) |  |
| 4091 | **RHD4-02-002-C051-(ICT)-Information and Communication Technologies Road Crossings** |  | 2026-08-23 → 2026-08-12 (-11d) |  |
| RHD4CZ5C051ICT3100 | Excavation for Road Crossings for ICT Network - (RD-C-5 /1)-Z5-C051-ICT | 2026-07-30 A | 2026-08-01 → 2026-08-05 A (+4d) | 0% → 100% |
| RHD4CZ5C051ICT3200 | Installation of Road Crossings for ICT Network - (RD-C-5 /1)-Z5-C051-ICT | 2026-08-17 → 2026-08-06 A (-11d) | 2026-08-18 → 2026-08-08 A (-10d) | 0% → 100% |
| RHD4CZ5C051ICT3300 | Pouring of Road Crossings for ICT Network - (RD-C-5 /1)-Z5-C051-ICT | 2026-08-19 → 2026-08-09 A (-10d) | 2026-08-20 → 2026-08-10 A (-10d) | 0% → 100% |
| RHD4CZ5C051ICT3400 | Backfilling of Road Crossings for ICT Network - (RD-C-5 /1)-Z5-C051-ICT | 2026-08-22 → 2026-08-11 A (-11d) | 2026-08-23 → 2026-08-12 A (-11d) | 0% → 100% |
| 4092 | **RHD4-02-002-Z5-C051-Security Network - CCTV** | 2027-04-15 → 2027-09-18 (+156d) | 2027-06-01 → 2027-10-31 (+152d) |  |
| 4093 | **RHD4-02-002-C051-(CCTV)-Civil Works** | 2027-04-15 → 2027-09-18 (+156d) | 2027-04-26 → 2027-09-29 (+156d) |  |
| RHD4CZ5C051CCTV2100 | Civil Works for Security Network - (RD-C-5 /1)-Z5-C051-CCTV | 2027-04-15 → 2027-09-18 (+156d) | 2027-04-26 → 2027-09-29 (+156d) |  |
| 4851 | **RHD4-02-002-A015-(CCTV)-CCTV Poles** | 2027-04-27 → 2027-09-30 (+156d) | 2027-05-08 → 2027-10-11 (+156d) |  |
| RHD4CZ5C051CCTV1100 | Excavation for RC Base for CCTV Poles for Security Network - (RD-C-5 /1)-Z5-C051-CCTV | 2027-04-27 → 2027-09-30 (+156d) | 2027-04-28 → 2027-10-02 (+157d) |  |
| RHD4CZ5C051CCTV1200 | Installation for RC Base for CCTV Poles for Security Network - (RD-C-5 /1)-Z5-C051-CCTV | 2027-04-29 → 2027-10-03 (+157d) | 2027-05-01 → 2027-10-04 (+156d) |  |
| RHD4CZ5C051CCTV1300 | Backfill for RC Base for CCTV Poles for Security Network - (RD-C-5 /1)-Z5-C051-CCTV | 2027-05-02 → 2027-10-05 (+156d) | 2027-05-03 → 2027-10-06 (+156d) |  |
| RHD4CZ5C051CCTV1400 | Installation for CCTV Poles for Security Network - (RD-C-5 /1)-Z5-C051-CCTV | 2027-05-04 → 2027-10-07 (+156d) | 2027-05-05 → 2027-10-09 (+157d) |  |
| RHD4CZ5C051CCTV1500 | Protection post Installation for CCTV Poles for Security Network - (RD-C-5 /1)-Z5-C051-CCTV | 2027-05-06 → 2027-10-10 (+157d) | 2027-05-08 → 2027-10-11 (+156d) |  |
| 4852 | **RHD4-02-002-A015-(CCTV)-Camera** | 2027-05-09 → 2027-10-12 (+156d) | 2027-05-10 → 2027-10-13 (+156d) |  |

| ID | Task | Start | Finish | Duration | Complete | Other |
| --- | --- | --- | --- | --- | --- | --- |
| RHD4CZ5C051CCTV3100 | Installation for Cameras for Security Network - (RD-C-5 /1)-Z5-C051-CCTV | 2027-05-09 → 2027-10-12 (+156d) | 2027-05-10 → 2027-10-13 (+156d) |  |  |  |
| 4853 | **RHD4-02-002-A015-(CCTV)-Power and Infrastructure** | 2027-05-06 → 2027-10-10 (+157d) | 2027-05-10 → 2027-10-13 (+156d) |  |  |  |
| RHD4CZ5C051CCTV4100 | Installation of Power outlet, UPS and midspan for PTZ Camerafor Cameras for Security Network - (RD-C-5 /1)-Z5-C051-CCTV | 2027-05-06 → 2027-10-10 (+157d) | 2027-05-08 → 2027-10-11 (+156d) |  |  |  |
| RHD4CZ5C051CCTV4200 | Short Range Wireless PoP wireless Bridgefor CCTV Poles for Security Network - (RD-L-16)-Z5-L016-CCTV | 2027-05-09 → 2027-10-12 (+156d) | 2027-05-10 → 2027-10-13 (+156d) |  |  | resources Skilled labor [21.76 h]; Unskilled Labor [43.52 h]; Electrician [21.76 h]; Equipment Opreator [43.52 h]; Excavator-Poclain [10.89 h]; Dump Truck [10.89 h]; Short Range wireless point to point wireless bridge [4 nr] → Skilled labor [21.76 h]; Unskilled Labor [43.52 h]; Electrician [21.76 h]; Equipment Opreator [43.52 h]; Excavator-Poclain [10.88 h]; Dump Truck [10.88 h]; Short Range wireless point to point wireless bridge [4 nr] |
| 4855 | **RHD4-02-002-A015-(CCTV)-CCTV Panels and Components** | 2027-05-11 → 2027-10-14 (+156d) | 2027-06-01 → 2027-10-31 (+152d) |  |  |  |
| RHD4CZ5C051CCTV6100 | Installation for CCTV Panels for Security Network - (RD-C-5 /1)-Z5-C051-CCTV | 2027-05-11 → 2027-10-14 (+156d) | 2027-06-01 → 2027-10-31 (+152d) |  |  |  |
| 4109 | **RHD4-02-002-Z5-RA07** | 2026-08-17 → 2026-05-20 (-89d) | 2027-07-06 → 2027-12-11 (+158d) |  |  |  |
| 4288 | **RHD4-02-002-Z5-RA07-Road Works - RD** | 2026-08-20 → 2026-05-20 (-92d) | 2027-07-06 → 2027-12-11 (+158d) |  |  |  |
| 4289 | **RHD4-02-002-RA07-(RD)-Subgrade** | 2026-08-20 → 2026-05-20 (-92d) | 2026-08-23 → 2026-06-03 (-81d) |  |  |  |
| RHD4CZ5RA07RD1100 | Supply, lay and compaction subgrade compacted thickness 300 mm for Roads - (ROUND-07)-Z5-RA07-RD | 2026-08-20 → 2026-05-20 A (-92d) | 2026-08-23 → 2026-06-03 A (-81d) |  | 0% → 100% |  |
| 4290 | **RHD4-02-002-RA07-(RD)-Aggregate Base Course** | 2026-08-24 → 2027-02-17 (+177d) | 2026-08-27 → 2027-02-24 (+181d) |  |  |  |
| RHD4CZ5RA07RD2100 | Supply, lay and compaction Aggregate base course compacted thickness 300 mmfor Roads - (ROUND-07)-Z5-RA07-RD | 2026-08-24 → 2027-02-17 (+177d) | 2026-08-27 → 2027-02-24 (+181d) | 4d → 6d |  |  |
| 4291 | **RHD4-02-002-RA07-(RD)-Bituminous base course Two Layers, including (MC1)&(RC2)** | 2026-08-29 → 2027-02-25 (+180d) | 2027-04-17 → 2027-10-03 (+169d) |  |  |  |
| RHD4CZ5RA07RD3100 | Supply, lay and Asphaltic base course including Prime Coat (MC1) for 1st Layer - (ROUND-07)-Z5-RA07-RD | 2026-08-29 → 2027-02-25 (+180d) | 2026-08-30 → 2027-02-28 (+182d) | 2d → 3d |  | resources Skilled labor [22.43 h]; Unskilled Labor [134.71 h]; Equipment Opreator [336.73 h]; Bobcat [22.43 h]; Roller compactor [22.43 h]; Asphalt Paver [22.43 h]; Rubber Compactor [44.87 h]; MC1/RC2 Sprinkler [22.43 h]; Dump Truck [202.02 h]; Bituminous base course (Grading I - Class A), including Prime coat (MC1) & tack coate (RC2) [821.24 m3] → Skilled labor [22.4 h]; Unskilled Labor [134.71 h]; Equipment Opreator [336.73 h]; Bobcat [22.4 h]; Roller compactor [22.4 h]; Asphalt Paver [22.4 h]; Rubber Compactor [44.87 h]; MC1/RC2 Sprinkler [22.4 h]; Dump Truck [202.02 h]; Bituminous base course (Grading I - Class A), including Prime coat (MC1) & tack coate (RC2) [821.24 m3] |
| RHD4CZ5RA07RD3200 | Supply, lay and Asphaltic base course including Tack Coat (RC2) for 2nd Layer - (ROUND-07)-Z5-RA07-RD | 2027-04-14 → 2027-09-30 (+169d) | 2027-04-17 → 2027-10-03 (+169d) |  |  | resources Skilled labor [22.43 h]; Unskilled Labor [134.71 h]; Equipment Opreator [336.73 h]; Bobcat [22.43 h]; Roller compactor [22.43 h]; Asphalt Paver [22.43 h]; Rubber Compactor [44.87 h]; MC1/RC2 Sprinkler [22.43 h]; Dump Truck [202.02 h]; Bituminous base course (Grading I - Class A), including Prime coat (MC1) & tack coate (RC2) [821.24 m3] → Skilled labor [22.4 h]; Unskilled Labor [134.71 h]; Equipment Opreator [336.73 h]; Bobcat [22.4 h]; Roller compactor [22.4 h]; Asphalt Paver [22.4 h]; Rubber Compactor [44.87 h]; MC1/RC2 Sprinkler [22.4 h]; Dump Truck [202.02 h]; Bituminous base course (Grading I - Class A), including Prime coat (MC1) & tack coate (RC2) [821.24 m3] |
| 4293 | **RHD4-02-002-RA07-(RD)-Precast Concrete Curb** | 2027-04-18 → 2027-10-04 (+169d) | 2027-04-22 → 2027-10-09 (+170d) |  |  |  |
| RHD4CZ5RA07RD5100 | Supply and installation Precast Concrete Kerb for Roads - (ROUND-07)-Z5-RA07-RD | 2027-04-18 → 2027-10-04 (+169d) | 2027-04-22 → 2027-10-09 (+170d) |  |  |  |
| 4296 | **RHD4-02-002-RA07-(RD)-Traffic Signage** | 2027-04-24 → 2027-10-10 (+169d) | 2027-04-29 → 2027-10-16 (+170d) |  |  |  |
| RHD4CZ5RA07RD8100 | Installation of Traffic Signage for Road Network - (ROUND-07)-Z5-RA07-RD | 2027-04-24 → 2027-10-10 (+169d) | 2027-04-29 → 2027-10-16 (+170d) |  |  |  |
| 4292 | **RHD4-02-002-RA07-(RD)-Bituminous concrete wearing course including tack coat (RC2)** | 2027-04-24 → 2027-10-10 (+169d) | 2027-04-25 → 2027-10-11 (+169d) |  |  |  |
| RHD4CZ5RA07RD4100 | Supply, lay and compaction Asphaltic wearing course including tack Coat (RC2)for Road Network - (ROUND-07)-Z5-RA07-RD | 2027-04-24 → 2027-10-10 (+169d) | 2027-04-25 → 2027-10-11 (+169d) |  |  |  |
| 4295 | **RHD4-02-002-RA07-(RD)-Pavement Marking** | 2027-05-01 → 2027-10-17 (+169d) | 2027-07-06 → 2027-12-11 (+158d) |  |  |  |
| RHD4CZ5RA07RD7100 | Pavement Markings for Road Network - (ROUND-07)-Z5-RA07-RD | 2027-05-01 → 2027-10-17 (+169d) | 2027-05-04 → 2027-10-20 (+169d) |  |  |  |
| RHD4CZ5RA07RD9200 | Installation for Wheel Stopper for Road Network - (ROUND-07)-Z5-RA07-RD | 2027-07-01 → 2027-11-30 (+152d) | 2027-07-06 → 2027-12-11 (+158d) | 5d → 10d |  |  |
| 4162 | **RHD4-02-002-Z5-RA07-Sewage Network - SW** | 2026-08-17 → 2026-08-04 (-13d) | 2026-09-03 → 2027-03-06 (+184d) |  |  |  |
| 4172 | **RHD4-02-002-RA07-(SW)-MH Works - 1200 mm diameter** | 2026-08-17 → 2026-08-09 (-8d) | 2026-09-03 → 2027-03-06 (+184d) |  |  |  |
| RHD4CZ5RA07SW3100 | Excavation and PC Blinding works for MH 1200 mm - (ROUND-07)-Z5-RA07-SW | 2026-08-17 → 2026-08-09 A (-8d) | 2026-08-19 → 2027-02-16 (+181d) |  | 0% → 80% | resources Skilled labor [27.23 h]; Unskilled Labor [27.23 h]; Equipment Opreator [43.56 h]; Excavator-Poclain [27.23 h]; Water Truck [2.72 h]; Dump Truck [13.61 h]; MH (1200mm Diameter) - SW - depth 3.51 -4.5m [1.25 nr] → Skilled labor [27.2 h]; Unskilled Labor [27.2 h]; Equipment Opreator [43.56 h]; Excavator-Poclain [27.2 h]; Water Truck [2.72 h]; Dump Truck [13.6 h]; MH (1200mm Diameter) - SW - depth 3.51 -4.5m [1.25 nr] |
| RHD4CZ5RA07SW3200 | Installation of Base for MH 1200 mm - (ROUND-07)-Z5-RA07-SW | 2026-08-20 → 2026-08-10 A (-10d) | 2026-08-23 → 2027-02-18 (+179d) |  | 0% → 40% |  |
| RHD4CZ5RA07SW3300 | MH Ring and C.Slab works and Backfilling works for MH 1200 mm - (ROUND-07)-Z5-RA07-SW | 2026-08-24 → 2027-02-20 (+180d) | 2026-08-26 → 2027-02-25 (+183d) | 3d → 5d |  |  |
| RHD4CZ5RA07SW3400 | Steel Cover for MH 1200 mm - (ROUND-07)-Z5-RA07-SW | 2026-08-27 → 2027-02-27 (+184d) | 2026-08-29 → 2027-02-28 (+183d) |  |  |  |
| RHD4CZ5RA07SW3500 | Finishing, Benching, Testing works for MH 1200 mm - (ROUND-07)-Z5-RA07-SW | 2026-08-30 → 2027-03-01 (+183d) | 2026-09-03 → 2027-03-06 (+184d) |  |  |  |
| 4168 | **RHD4-02-002-RA07-(SW)-UPVC Pipes - 200 mm diameter** | 2026-08-24 → 2026-08-04 (-20d) | 2026-09-03 → 2027-03-02 (+180d) |  |  |  |
| RHD4CZ5RA07SW2100 | Excavation works for UPVC Pipe Line 200 mm - (ROUND-07)-Z5-RA07-SW | 2026-08-24 → 2026-08-04 A (-20d) | 2026-08-25 → 2026-09-17 A (+23d) |  | 0% → 100% | resources Skilled labor [16.77 h]; Unskilled Labor [16.77 h]; Equipment Opreator [20.15 h]; Excavator-Poclain [16.77 h]; Dump Truck [3.38 h]; UPVC (200mm Diameter) - SW - Depth: 2.51m - 3.5m [34.68 m]; UPVC (200mm Diameter) - SW - Depth: 3.51m - 4.5m → Skilled labor [16.8 h]; Unskilled Labor [16.8 h]; Equipment Opreator [20.15 h]; Excavator-Poclain [16.8 h]; Dump Truck [3.38 h]; UPVC (200mm Diameter) - SW - Depth: 2.51m - 3.5m [34.68 m]; UPVC (200mm Diameter) - SW - Depth: 3.51m - 4.5m |
| RHD4CZ5RA07SW2200 | Bedding works for UPVC Pipe Line 200 mm - (ROUND-07)-Z5-RA07-SW | 2026-08-26 → 2026-08-06 A (-20d) | 2026-08-27 → 2026-09-20 A (+24d) |  | 0% → 100% | resources Skilled labor [16.77 h]; Unskilled Labor [33.54 h]; Equipment Opreator [33.54 h]; Excavator-Poclain [16.77 h]; Dump Truck [16.77 h]; UPVC (200mm Diameter) - SW - Depth: 2.51m - 3.5m [11.56 m]; UPVC (200mm Diameter) - SW - Depth: 3.51m - 4.5m → Skilled labor [16.8 h]; Unskilled Labor [33.54 h]; Equipment Opreator [33.54 h]; Excavator-Poclain [16.8 h]; Dump Truck [16.8 h]; UPVC (200mm Diameter) - SW - Depth: 2.51m - 3.5m [11.56 m]; UPVC (200mm Diameter) - SW - Depth: 3.51m - 4.5m |
| RHD4CZ5RA07SW2300 | Installing for UPVC Pipe Line 200 mm - (ROUND-07)-Z5-RA07-SW | 2026-08-29 → 2026-08-10 A (-19d) | 2026-08-30 → 2026-09-22 A (+23d) |  | 0% → 100% | resources Unskilled Labor [33.54 h]; Plumber [16.77 h]; Equipment Opreator [16.77 h]; Boom Truck [16.77 h]; UPVC (200mm Diameter) - SW - Depth: 2.51m - 3.5m [92.49 m]; UPVC (200mm Diameter) - SW - Depth: 3.51m - 4.5m → Unskilled Labor [33.54 h]; Plumber [16.8 h]; Equipment Opreator [16.8 h]; Boom Truck [16.8 h]; UPVC (200mm Diameter) - SW - Depth: 2.51m - 3.5m [92.49 m]; UPVC (200mm Diameter) - SW - Depth: 3.51m - 4.5m |
| RHD4CZ5RA07SW2500 | Backfilling and warning tape works for UPVC Pipe Line 200 mm - (ROUND-07)-Z5-RA07-SW | 2026-09-02 → 2026-08-13 A (-20d) | 2026-09-03 → 2027-03-02 (+180d) |  | 0% → 42% | resources Skilled labor [16.77 h]; Unskilled Labor [33.54 h]; Equipment Opreator [33.54 h]; Excavator-Poclain [16.77 h]; Dump Truck [16.77 h]; UPVC (200mm Diameter) - SW - Depth: 2.51m - 3.5m [46.24 m]; UPVC (200mm Diameter) - SW - Depth: 3.51m - 4.5m → Skilled labor [16.8 h]; Unskilled Labor [33.54 h]; Equipment Opreator [33.54 h]; Excavator-Poclain [16.8 h]; Dump Truck [16.8 h]; UPVC (200mm Diameter) - SW - Depth: 2.51m - 3.5m [46.24 m]; UPVC (200mm Diameter) - SW - Depth: 3.51m - 4.5m |
| RHD4CZ5RA07SW2400 | Primary Test for UPVC Pipe Line 200 mm - (ROUND-07)-Z5-RA07-SW | 2026-08-31 → 2027-02-27 (+180d) | 2026-09-01 → 2027-02-28 (+180d) |  |  |  |
| 4199 | **RHD4-02-002-Z5-RA07-Potable Network - PT** | 2026-11-14 → 2026-08-04 (-102d) | 2026-12-08 → 2027-05-03 (+146d) |  |  |  |
| 4201 | **RHD4-02-002-RA07-(PT)-HDPE Pipes - 160 mm diameter** | 2026-11-14 → 2026-08-04 (-102d) | 2026-11-24 → 2027-04-19 (+146d) |  |  |  |
| RHD4CZ5RA07PT1101 | Excavation works for HDPE Pipline 160 mm - (ROUND-07)-Z5-RA07-PT | 2026-11-14 → 2026-08-04 A (-102d) | 2026-11-15 → 2027-04-10 (+146d) |  | 0% → 92% |  |
| RHD4CZ5RA07PT1201 | Bedding works for HDPE Pipline 160 mm - (ROUND-07)-Z5-RA07-PT | 2026-11-16 → 2026-08-06 A (-102d) | 2026-11-17 → 2027-04-12 (+146d) |  | 0% → 92% |  |
| RHD4CZ5RA07PT1301 | Installing for HDPE Pipline 160 mm - (ROUND-07)-Z5-RA07-PT | 2026-11-18 → 2026-08-08 A (-102d) | 2026-11-19 → 2027-04-14 (+146d) |  | 0% → 92% |  |
| RHD4CZ5RA07PT1401 | Primary Test for HDPE Pipline 160 mm - (ROUND-07)-Z5-RA07-PT | 2026-11-21 → 2027-04-15 (+145d) | 2026-11-22 → 2027-04-17 (+146d) |  |  |  |
| RHD4CZ5RA07PT1501 | Backfilling and warning tape works for HDPE Pipline 160 mm - (ROUND-07)-Z5-RA07-PT | 2026-11-23 → 2027-04-18 (+146d) | 2026-11-24 → 2027-04-19 (+146d) |  |  | resources Skilled labor [6.86 h]; Unskilled Labor [13.61 h]; Equipment Opreator [13.61 h]; Excavator-Poclain [6.86 h]; Dump Truck [6.86 h]; HDPE (160mm Diameter) - PT - Depth: less than 1.5m [25.07 m] → Skilled labor [6.86 h]; Unskilled Labor [13.6 h]; Equipment Opreator [13.6 h]; Excavator-Poclain [6.86 h]; Dump Truck [6.86 h]; HDPE (160mm Diameter) - PT - Depth: less than 1.5m [25.07 m] |
| 1751 | **RHD4-02-002-RA07-(PT)-Air Valve Chambers** | 2026-11-28 → 2027-04-22 (+145d) | 2026-12-06 → 2027-05-01 (+146d) |  |  |  |
| RHD4CZ5RA07PT2102 | Excavation and Bedding for Air Valve Chambers for Potable Water Network - (ROUND-07)-Z5-RA07-PT | 2026-11-28 → 2027-04-22 (+145d) | 2026-11-29 → 2027-04-24 (+146d) |  |  |  |
| RHD4CZ5RA07PT2202 | PC works for Air Valve Chambers for Potable Water Network - (ROUND-07)-Z5-RA07-PT | 2026-11-30 → 2027-04-25 (+146d) | 2026-12-01 → 2027-04-26 (+146d) |  |  |  |
| RHD4CZ5RA07PT2302 | Installation for Air Valve Chambers for Potable Water Network - (ROUND-07)-Z5-RA07-PT | 2026-12-02 → 2027-04-27 (+146d) | 2026-12-03 → 2027-04-28 (+146d) |  |  |  |
| RHD4CZ5RA07PT2402 | Backfilling works for Air Valve Chambers for Potable Water Network - (ROUND-07)-Z5-RA07-PT | 2026-12-05 → 2027-04-29 (+145d) | 2026-12-06 → 2027-05-01 (+146d) |  |  |  |
| 2888 | **RHD4-02-002-RA071-(PT)-Fire Hydrant** | 2026-11-28 → 2027-04-22 (+145d) | 2026-12-08 → 2027-05-03 (+146d) |  |  |  |
| RHD4CZ5RA07PT4100 | Excavation and Bedding and Pipe Installation for Fire Hydrant - (ROUND-07)-Z5-RA07-PT | 2026-11-28 → 2027-04-22 (+145d) | 2026-11-29 → 2027-04-24 (+146d) |  |  |  |
| RHD4CZ5RA07PT4200 | Valve Installation for Fire Hydrant - (ROUND-07)-Z5-RA07-PT | 2026-11-30 → 2027-04-25 (+146d) | 2026-12-01 → 2027-04-26 (+146d) |  |  |  |
| RHD4CZ5RA07PT4300 | Stem for Fire Hydrant - (ROUND-07)-Z5-RA07-PT | 2026-12-02 → 2027-04-27 (+146d) | 2026-12-03 → 2027-04-28 (+146d) |  |  |  |
| RHD4CZ5RA07PT4400 | Fire Installation for Fire Hydrant - (ROUND-07)-Z5-RA07-PT | 2026-12-05 → 2027-04-29 (+145d) | 2026-12-06 → 2027-05-01 (+146d) |  |  |  |
| RHD4CZ5RA07PT4500 | Protection Barriers for Fire Hydrant - (ROUND-07)-Z5-RA07-PT | 2026-12-07 → 2027-05-02 (+146d) | 2026-12-08 → 2027-05-03 (+146d) |  |  |  |
| 4208 | **RHD4-02-002-RA07-(PT)-Wash out Valve Chambers** | 2026-11-25 → 2027-04-20 (+146d) | 2026-12-06 → 2027-05-01 (+146d) |  |  |  |
| RHD4CZ5RA07PT2101 | Excavation and Bedding for Wash out Valve Chambers for Potable Water Network - (ROUND-07)-Z5-RA07-PT | 2026-11-25 → 2027-04-20 (+146d) | 2026-11-26 → 2027-04-21 (+146d) |  |  |  |
| RHD4CZ5RA07PT2201 | PC works for Wash out Valve Chambers for Potable Water Network - (ROUND-07)-Z5-RA07-PT | 2026-11-28 → 2027-04-22 (+145d) | 2026-11-29 → 2027-04-24 (+146d) |  |  |  |
| RHD4CZ5RA07PT2301 | Installation for Wash out Valve Chambers for Potable Water Network - (ROUND-07)-Z5-RA07-PT | 2026-11-30 → 2027-04-25 (+146d) | 2026-12-01 → 2027-04-26 (+146d) |  |  |  |
| RHD4CZ5RA07PT2401 | Backfilling works for Wash out Valve Chambers for Potable Water Network - (ROUND-07)-Z5-RA07-PT | 2026-12-05 → 2027-04-29 (+145d) | 2026-12-06 → 2027-05-01 (+146d) |  |  |  |
| 4209 | **RHD4-02-002-RA07-(PT)-Wash out Valves** | 2026-12-02 → 2027-04-27 (+146d) | 2026-12-08 → 2027-05-03 (+146d) |  |  |  |
| RHD4CZ5RA07PT3102 | Installation for Wash out Valves for Potable Water Network - (ROUND-07)-Z5-RA07-PT | 2026-12-02 → 2027-04-27 (+146d) | 2026-12-03 → 2027-04-28 (+146d) |  |  |  |
| RHD4CZ5RA07PT3202 | Stem and Service box for Wash out Valves for Potable Water Network - (ROUND-07)-Z5-RA07-PT | 2026-12-07 → 2027-05-02 (+146d) | 2026-12-08 → 2027-05-03 (+146d) |  |  |  |
| 1752 | **RHD4-02-002-RA07-(PT)-Air Valves** | 2026-12-05 → 2027-04-29 (+145d) | 2026-12-08 → 2027-05-03 (+146d) |  |  |  |
| RHD4CZ5RA07PT3103 | Installation for Air Valves for Potable Water Network - (ROUND-07)-Z5-RA07-PT | 2026-12-05 → 2027-04-29 (+145d) | 2026-12-06 → 2027-05-01 (+146d) |  |  |  |
| RHD4CZ5RA07PT3203 | Stem and Service box for Air Valves for Potable Water Network - (ROUND-07)-Z5-RA07-PT | 2026-12-07 → 2027-05-02 (+146d) | 2026-12-08 → 2027-05-03 (+146d) |  |  |  |
| 4205 | **RHD4-02-002-RA07-(PT)-Gate Valves (Direct Buried)** | 2026-11-18 → 2027-04-13 (+146d) | 2026-11-26 → 2027-04-21 (+146d) |  |  |  |
| RHD4CZ5RA07PT3100 | Installation for Direct Buried Gate Valves - (ROUND-07)-Z5-RA07-PT | 2026-11-18 → 2027-04-13 (+146d) | 2026-11-19 → 2027-04-14 (+146d) |  |  |  |
| RHD4CZ5RA07PT3200 | Stem and Service box for Direct Buried Gate Valves - (ROUND-07)-Z5-RA07-PT | 2026-11-25 → 2027-04-20 (+146d) | 2026-11-26 → 2027-04-21 (+146d) |  |  |  |
| 4214 | **RHD4-02-002-Z5-RA07-Irrigation Network - IRR** | 2026-11-16 → 2026-08-04 (-104d) | 2026-12-08 → 2027-05-03 (+146d) |  |  |  |

| ID | Task | Start | Finish | Complete | Other |
| --- | --- | --- | --- | --- | --- |
| 4217 | **RHD4-02-002-RA07-(IRR)-HDPE Pipes - 200 mm diameter** | 2026-11-16 → 2026-08-04 (-104d) | 2026-11-26 → 2027-04-21 (+146d) |  |  |
| RHD4CZ5RA07IRR1102 | Excavation works for HDPE Pipline 200 mm - (ROUND-07)-Z5-RA07-IRR | 2026-11-16 → 2026-08-04 A (-104d) | 2026-11-17 → 2027-04-12 (+146d) | 0% → 28% |  |
| RHD4CZ5RA07IRR1202 | Bedding works for HDPE Pipline 200 mm - (ROUND-07)-Z5-RA07-IRR | 2026-11-18 → 2026-08-06 A (-104d) | 2026-11-19 → 2027-04-14 (+146d) | 0% → 37% |  |
| RHD4CZ5RA07IRR1302 | Installing for HDPE Pipline 200 mm - (ROUND-07)-Z5-RA07-IRR | 2026-11-21 → 2026-08-08 A (-105d) | 2026-11-22 → 2027-04-17 (+146d) | 0% → 24% |  |
| RHD4CZ5RA07IRR1402 | Primary Test for HDPE Pipline 200 mm - (ROUND-07)-Z5-RA07-IRR | 2026-11-23 → 2027-04-18 (+146d) | 2026-11-24 → 2027-04-19 (+146d) |  |  |
| RHD4CZ5RA07IRR1502 | Backfilling and warning tape works for HDPE Pipline 200 mm - (ROUND-07)-Z5-RA07-IRR | 2026-11-25 → 2027-04-20 (+146d) | 2026-11-26 → 2027-04-21 (+146d) |  |  |
| 4223 | **RHD4-02-002-RA07-(IRR)-Gate Valves (Direct Buried)** | 2026-11-21 → 2027-04-15 (+145d) | 2026-11-24 → 2027-04-19 (+146d) |  |  |
| RHD4CZ5RA07IRR3100 | Installation for Direct Buried Gate Valves - (ROUND-07)-Z5-RA07-IRR | 2026-11-21 → 2027-04-15 (+145d) | 2026-11-22 → 2027-04-17 (+146d) |  |  |
| RHD4CZ5RA07IRR3200 | Stem and Service box for Direct Buried Gate Valves - (ROUND-07)-Z5-RA07-IRR | 2026-11-23 → 2027-04-18 (+146d) | 2026-11-24 → 2027-04-19 (+146d) |  |  |
| 4226 | **RHD4-02-002-RA07-(IRR)-Wash out Chamber** | 2026-11-28 → 2027-04-22 (+145d) | 2026-12-06 → 2027-05-01 (+146d) |  |  |
| RHD4CZ5RA07IRR2101 | Excavation and Bedding for Wash out Chamber for Irrigation Network - (ROUND-07)-Z5-RA07-IRR | 2026-11-28 → 2027-04-22 (+145d) | 2026-11-29 → 2027-04-24 (+146d) |  |  |
| RHD4CZ5RA07IRR2201 | PC works for Wash out Chamber for Irrigation Network - (ROUND-07)-Z5-RA07-IRR | 2026-11-30 → 2027-04-25 (+146d) | 2026-12-01 → 2027-04-26 (+146d) |  |  |
| RHD4CZ5RA07IRR2301 | Installation for Wash out Chamber for Irrigation Network - (ROUND-07)-Z5-RA07-IRR | 2026-12-02 → 2027-04-27 (+146d) | 2026-12-03 → 2027-04-28 (+146d) |  |  |
| RHD4CZ5RA07IRR2401 | Backfilling works for Wash out Chamber for Irrigation Network - (ROUND-07)-Z5-RA07-IRR | 2026-12-05 → 2027-04-29 (+145d) | 2026-12-06 → 2027-05-01 (+146d) |  |  |
| 4227 | **RHD4-02-002-RA07-(IRR)-Wash out Valves** | 2026-12-05 → 2027-04-29 (+145d) | 2026-12-08 → 2027-05-03 (+146d) |  |  |
| RHD4CZ5RA07IRR3102 | Installation for Wash out Valve for Irrigation Network - (ROUND-07)-Z5-RA07-IRR | 2026-12-05 → 2027-04-29 (+145d) | 2026-12-06 → 2027-05-01 (+146d) |  |  |
| RHD4CZ5RA07IRR3202 | Stem and Service box for Wash out Valve for Irrigation Network - (ROUND-07)-Z5-RA07-IRR | 2026-12-07 → 2027-05-02 (+146d) | 2026-12-08 → 2027-05-03 (+146d) |  |  |
| 6107 | **RHD4-02-002-RA07-(IRR)-HDPE Pipes - 160 mm diameter** | 2026-11-18 → 2026-08-04 (-106d) | 2026-12-01 → 2027-04-26 (+146d) |  |  |
| RHD4CZ5RA07IRR1100 | Excavation works for HDPE Pipline 160 mm - (ROUND-07)-Z5-RA07-IRR | 2026-11-18 → 2026-08-04 A (-106d) | 2026-11-19 → 2027-04-14 (+146d) | 0% → 55% | resources Skilled labor [6.43 h]; Unskilled Labor [6.43 h]; Equipment Opreator [7.73 h]; Excavator-Poclain [6.43 h]; Dump Truck [1.31 h]; HDPE (160mm Diameter) - TSE - Depth: less than 1.5m [3.88 m]; HDPE (160mm Diameter) - TSE - Depth: more than 1.51m [7.5 m] → Skilled labor [6.4 h]; Unskilled Labor [6.4 h]; Equipment Opreator [7.73 h]; Excavator-Poclain [6.4 h]; Dump Truck [1.31 h]; HDPE (160mm Diameter) - TSE - Depth: less than 1.5m [3.88 m]; HDPE (160mm Diameter) - TSE - Depth: more than 1.51m [7.5 m] |
| RHD4CZ5RA07IRR1200 | Bedding works for HDPE Pipline 160 mm - (ROUND-07)-Z5-RA07-IRR | 2026-11-21 → 2026-08-06 A (-107d) | 2026-11-22 → 2027-04-17 (+146d) | 0% → 48% |  |
| RHD4CZ5RA07IRR1300 | Installing for HDPE Pipline 160 mm - (ROUND-07)-Z5-RA07-IRR | 2026-11-23 → 2026-08-08 A (-107d) | 2026-11-24 → 2027-04-19 (+146d) | 0% → 45% | resources Unskilled Labor [12.85 h]; Plumber [6.43 h]; Equipment Opreator [6.43 h]; Boom Truck [6.43 h]; HDPE (160mm Diameter) - TSE - Depth: less than 1.5m [17.46 m]; HDPE (160mm Diameter) - TSE - Depth: more than 1.51m [20 m] → Unskilled Labor [12.85 h]; Plumber [6.4 h]; Equipment Opreator [6.4 h]; Boom Truck [6.4 h]; HDPE (160mm Diameter) - TSE - Depth: less than 1.5m [17.46 m]; HDPE (160mm Diameter) - TSE - Depth: more than 1.51m [20 m] |
| RHD4CZ5RA07IRR1400 | Primary Test for HDPE Pipline 160 mm - (ROUND-07)-Z5-RA07-IRR | 2026-11-28 → 2027-04-22 (+145d) | 2026-11-29 → 2027-04-24 (+146d) |  |  |
| RHD4CZ5RA07IRR1500 | Backfilling and warning tape works for HDPE Pipline 160 mm - (ROUND-07)-Z5-RA07-IRR | 2026-11-30 → 2027-04-25 (+146d) | 2026-12-01 → 2027-04-26 (+146d) |  |  |
| 1771 | **RHD4-02-002-RA07-(IRR)-Concrete Encasement** | 2026-11-25 → 2027-04-20 (+146d) | 2026-11-26 → 2027-04-21 (+146d) |  |  |
| RHD4CZ5RA07IRR5100 | Pipe Encasement for Irrigation Pipelines - (ROUND-07)-Z5-RA07-IRR | 2026-11-25 → 2027-04-20 (+146d) | 2026-11-26 → 2027-04-21 (+146d) |  |  |
| 4248 | **RHD4-02-002-Z5-RA07-Medium Voltage Network - MV** | 2027-01-03 → 2027-07-03 (+181d) | 2027-01-26 → 2027-07-26 (+181d) |  |  |
| 4249 | **RHD4-02-002-RA07-(MV)-Medium Voltage cable trench** | 2027-01-03 → 2027-07-03 (+181d) | 2027-01-11 → 2027-07-11 (+181d) |  |  |
| RHD4CZ5RA07MV1100 | Excavation for Medium Voltage Trench - (ROUND-07)-Z5-RA07-MV | 2027-01-03 → 2027-07-03 (+181d) | 2027-01-05 → 2027-07-05 (+181d) |  |  |
| RHD4CZ5RA07MV1200 | Trench Backfilling for Medium Voltage Network - (ROUND-07)-Z5-RA07-MV | 2027-01-09 → 2027-07-08 (+180d) | 2027-01-11 → 2027-07-11 (+181d) |  |  |
| 4251 | **RHD4-02-002-RA07-(MV)-Medium Voltage cables 3Cx 500 mm²** | 2027-01-06 → 2027-07-06 (+181d) | 2027-01-17 → 2027-07-17 (+181d) |  |  |
| RHD4CZ5RA07MV3100 | Installation of Medium Voltage Cables 3Cx 500 mm² - (ROUND-07)-Z5-RA07-MV | 2027-01-06 → 2027-07-06 (+181d) | 2027-01-10 → 2027-07-10 (+181d) |  |  |
| RHD4CZ5RA07MV3200 | Joints Installation of Medium Voltage Cables 3Cx 500 mm² - (ROUND-07)-Z5-RA07-MV | 2027-01-11 → 2027-07-11 (+181d) | 2027-01-12 → 2027-07-12 (+181d) |  |  |
| RHD4CZ5RA07MV3300 | Testing of Medium Voltage Cables 3Cx 500 mm² - (ROUND-07)-Z5-RA07-MV | 2027-01-13 → 2027-07-13 (+181d) | 2027-01-14 → 2027-07-14 (+181d) |  |  |
| RHD4CZ5RA07MV3400 | Termination of Medium Voltage Cables 3Cx 500 mm² - (ROUND-07)-Z5-RA07-MV | 2027-01-16 → 2027-07-15 (+180d) | 2027-01-17 → 2027-07-17 (+181d) |  |  |
| 4252 | **RHD4-02-002-RA07-(MV)-Medium Voltage cables 3Cx 50 mm²** | 2027-01-06 → 2027-07-06 (+181d) | 2027-01-16 → 2027-07-15 (+180d) |  |  |
| RHD4CZ5RA07MV3101 | Installation of Medium Voltage Cables 3Cx 50 mm² - (ROUND-07)-Z5-RA07-MV | 2027-01-06 → 2027-07-06 (+181d) | 2027-01-07 → 2027-07-07 (+181d) |  |  |
| RHD4CZ5RA07MV3301 | Testing of Medium Voltage Cables 3Cx 50 mm² - (ROUND-07)-Z5-RA07-MV | 2027-01-12 → 2027-07-12 (+181d) | 2027-01-13 → 2027-07-13 (+181d) |  |  |
| RHD4CZ5RA07MV3401 | Termination of Medium Voltage Cables 3Cx 50 mm² - (ROUND-07)-Z5-RA07-MV | 2027-01-14 → 2027-07-14 (+181d) | 2027-01-16 → 2027-07-15 (+180d) |  |  |
| 4254 | **RHD4-02-002-RA07-(MV)-Unit Substations** | 2027-01-12 → 2027-07-12 (+181d) | 2027-01-26 → 2027-07-26 (+181d) |  |  |
| RHD4CZ5RA07MV5100 | Excavation for Unit Substations for Medium Voltage Network - (ROUND-07)-Z5-RA07-MV | 2027-01-12 → 2027-07-12 (+181d) | 2027-01-13 → 2027-07-13 (+181d) |  |  |
| RHD4CZ5RA07MV5200 | Concrete Base Placement for Unit Substations for Medium Voltage Network - (ROUND-07)-Z5-RA07-MV | 2027-01-14 → 2027-07-14 (+181d) | 2027-01-16 → 2027-07-15 (+180d) |  |  |
| RHD4CZ5RA07MV5300 | Installation for Fences and doors for Medium Voltage Network - (ROUND-07)-Z5-RA07-MV | 2027-01-17 → 2027-07-17 (+181d) | 2027-01-21 → 2027-07-21 (+181d) |  |  |
| RHD4CZ5RA07MV5400 | Installation for Unit Substations for Medium Voltage Network - (ROUND-07)-Z5-RA07-MV | 2027-01-23 → 2027-07-22 (+180d) | 2027-01-26 → 2027-07-26 (+181d) |  |  |
| 4255 | **RHD4-02-002-Z5-RA07-Low Voltage Network - LV** | 2026-12-02 → 2026-08-04 (-120d) | 2026-12-30 → 2027-05-22 (+143d) |  |  |
| 4256 | **RHD4-02-002-RA07-(LV)-Low Voltage duct banks** | 2026-12-02 → 2026-08-04 (-120d) | 2026-12-12 → 2026-08-12 (-122d) |  |  |
| RHD4CZ5RA07LV2100 | Excavation of Duct Banks for Low Voltage Network - (ROUND-07)-Z5-RA07-LV | 2026-12-02 → 2026-08-04 A (-120d) | 2026-12-03 → 2026-08-05 A (-120d) | 0% → 100% |  |
| RHD4CZ5RA07LV2200 | Installation of Duct Banks for Low Voltage Network - (ROUND-07)-Z5-RA07-LV | 2026-12-05 → 2026-08-06 A (-121d) | 2026-12-07 → 2026-08-09 A (-120d) | 0% → 100% | resources Carpenter [3.05 h]; Skilled labor [30.38 h]; Unskilled Labor [30.38 h]; Steel Fixer [3.05 h]; Duct bank for LV cables UPVC (2xø110mm) [2.79 m] → Carpenter [3.05 h]; Skilled labor [30.4 h]; Unskilled Labor [30.4 h]; Steel Fixer [3.05 h]; Duct bank for LV cables UPVC (2xø110mm) [2.79 m] |
| RHD4CZ5RA07LV2300 | Pouring of Duct Banks for Low Voltage Network - (ROUND-07)-Z5-RA07-LV | 2026-12-08 → 2026-08-09 A (-121d) | 2026-12-09 → 2026-08-10 A (-121d) | 0% → 100% | resources Skilled labor [20.26 h]; Unskilled Labor [20.26 h]; Equipment Opreator [8.06 h]; Concrete Mixer Truck [4.03 h]; Concrete Pump [4.03 h]; Duct bank for LV cables UPVC (2xø110mm) [18.11 m] → Skilled labor [20.26 h]; Unskilled Labor [20.26 h]; Equipment Opreator [8.06 h]; Concrete Mixer Truck [4 h]; Concrete Pump [4 h]; Duct bank for LV cables UPVC (2xø110mm) [18.11 m] |
| RHD4CZ5RA07LV2400 | Backfilling of Duct Banks for Low Voltage Network - (ROUND-07)-Z5-RA07-LV | 2026-12-10 → 2026-08-11 A (-121d) | 2026-12-12 → 2026-08-12 A (-122d) | 0% → 100% |  |
| 4257 | **RHD4-02-002-RA07-(LV)-Low Voltage Drawpit** | 2026-12-10 → 2027-04-27 (+138d) | 2026-12-14 → 2027-05-01 (+138d) |  |  |
| RHD4CZ5RA07LV5100 | Excavation of Drawpit size 900x900x1000mm for Low Voltage Network - (ROUND-07)-Z5-RA07-LV | 2026-12-10 → 2027-04-27 (+138d) | 2026-12-12 → 2027-04-28 (+137d) |  |  |
| RHD4CZ5RA07LV5200 | Installation of Drawpit size 900x900x1000mm for Low Voltage Network - (ROUND-07)-Z5-RA07-LV | 2026-12-13 → 2027-04-29 (+137d) | 2026-12-14 → 2027-05-01 (+138d) |  |  |
| 4258 | **RHD4-02-002-RA07-(LV)-Low Voltage cables** | 2026-12-15 → 2027-05-02 (+138d) | 2026-12-23 → 2027-05-10 (+138d) |  |  |
| RHD4CZ5RA07LV3100 | Excavation for Low Voltage Cables for Low Voltage Network - (ROUND-07)-Z5-RA07-LV | 2026-12-15 → 2027-05-02 (+138d) | 2026-12-16 → 2027-05-03 (+138d) |  |  |
| RHD4CZ5RA07LV3200 | Cable Laying of Low Voltage Cables for Low Voltage Network - (ROUND-07)-Z5-RA07-LV | 2026-12-17 → 2027-05-04 (+138d) | 2026-12-19 → 2027-05-05 (+137d) |  |  |
| RHD4CZ5RA07LV3300 | Warning tape and Backfill for Low Voltage Cables for Low Voltage Network - (ROUND-07)-Z5-RA07-LV | 2026-12-20 → 2027-05-06 (+137d) | 2026-12-21 → 2027-05-08 (+138d) |  |  |
| RHD4CZ5RA07LV3400 | Testing of Low Voltage Cables for Low Voltage Network - (ROUND-07)-Z5-RA07-LV | 2026-12-22 → 2027-05-09 (+138d) | 2026-12-23 → 2027-05-10 (+138d) |  |  |
| 4259 | **RHD4-02-002-RA07-(LV)-Low Voltage Distribution Pillars** | 2026-12-24 → 2027-05-11 (+138d) | 2026-12-30 → 2027-05-22 (+143d) |  |  |
| RHD4CZ5RA07LV4100 | Leveling for Distribution Pillars for Low Voltage Network - (ROUND-07)-Z5-RA07-LV | 2026-12-24 → 2027-05-11 (+138d) | 2026-12-26 → 2027-05-12 (+137d) |  |  |
| RHD4CZ5RA07LV4200 | Lean Concrete for Distribution Pillars for Low Voltage Network - (ROUND-07)-Z5-RA07-LV | 2026-12-27 → 2027-05-13 (+137d) | 2026-12-28 → 2027-05-19 (+142d) |  |  |
| RHD4CZ5RA07LV4300 | Installation of Distribution Pillars for Low Voltage Network - (ROUND-07)-Z5-RA07-LV | 2026-12-29 → 2027-05-20 (+142d) | 2026-12-30 → 2027-05-22 (+143d) |  |  |
| 4261 | **RHD4-02-002-Z5-RA07-Street Lighting Network - SL** | 2026-12-05 → 2026-08-04 (-123d) | 2027-01-28 → 2027-06-20 (+143d) |  |  |
| 4262 | **RHD4-02-002-RA07-(SL)-Street Lighting duct banks** | 2026-12-05 → 2026-08-04 (-123d) | 2026-12-22 → 2027-05-19 (+148d) |  |  |
| RHD4CZ5RA07SL2100 | Excavation of Duct Banks for Street Lighting Network - (ROUND-07)-Z5-RA07-SL | 2026-12-05 → 2026-08-04 A (-123d) | 2026-12-08 → 2027-05-01 (+144d) | 0% → 92% | resources Skilled labor [34.41 h]; Unskilled Labor [34.41 h]; Equipment Opreator [68.94 h]; Excavator-Poclain [34.41 h]; Dump Truck [34.41 h]; Road Crossing Duct for Street Lighting cables UPVC (2x?110mm) [3.39 m]; Road Crossing Duct for Street Lighting cables UPVC (4x?110mm) [1.36 m] → Skilled labor [34.4 h]; Unskilled Labor [34.4 h]; Equipment Opreator [68.94 h]; Excavator-Poclain [34.4 h]; Dump Truck [34.4 h]; Road Crossing Duct for Street Lighting cables UPVC (2x?110mm) [3.39 m]; Road Crossing Duct for Street Lighting cables UPVC (4x?110mm) [1.36 m] |
| RHD4CZ5RA07SL2200 | Installation of Duct Banks for Street Lighting Network - (ROUND-07)-Z5-RA07-SL | 2026-12-09 → 2026-08-06 A (-125d) | 2026-12-14 → 2027-05-06 (+143d) | 0% → 92% |  |
| RHD4CZ5RA07SL2300 | Pouring of Duct Banks for Street Lighting Network - (ROUND-07)-Z5-RA07-SL | 2026-12-15 → 2026-08-09 A (-128d) | 2026-12-19 → 2027-05-11 (+143d) | 0% → 92% | resources Skilled labor [34.41 h]; Unskilled Labor [34.41 h]; Equipment Opreator [13.83 h]; Concrete Mixer Truck [6.86 h]; Concrete Pump [6.86 h]; Road Crossing Duct for Street Lighting cables UPVC (2x?110mm) [22.01 m]; Road Crossing Duct for Street Lighting cables UPVC (4x?110mm) [8.83 m] → Skilled labor [34.4 h]; Unskilled Labor [34.4 h]; Equipment Opreator [13.83 h]; Concrete Mixer Truck [6.86 h]; Concrete Pump [6.86 h]; Road Crossing Duct for Street Lighting cables UPVC (2x?110mm) [22.01 m]; Road Crossing Duct for Street Lighting cables UPVC (4x?110mm) [8.83 m] |
| RHD4CZ5RA07SL2400 | Backfilling of Duct Banks for Street Lighting Network - (ROUND-07)-Z5-RA07-SL | 2026-12-20 → 2026-08-11 A (-131d) | 2026-12-22 → 2027-05-19 (+148d) | 0% → 92% |  |
| 4263 | **RHD4-02-002-RA07-(SL)-Street Lighting Drawpit** | 2026-12-31 → 2027-05-23 (+143d) | 2027-01-04 → 2027-05-26 (+142d) |  |  |
| RHD4CZ5RA07SL5100 | Excavation of Drawpit size 600x600x900mm for Street Lighting Network - (ROUND-07)-Z5-RA07-SL | 2026-12-31 → 2027-05-23 (+143d) | 2027-01-02 → 2027-05-24 (+142d) |  |  |
| RHD4CZ5RA07SL5200 | Installation of Drawpit size 600x600x900mm for Street Lighting Network - (ROUND-07)-Z5-RA07-SL | 2027-01-03 → 2027-05-25 (+142d) | 2027-01-04 → 2027-05-26 (+142d) |  |  |

| ID | Task | Start | Finish | Duration | Complete | Other |
| --- | --- | --- | --- | --- | --- | --- |
| 4264 | **RHD4-02-002-RA07-(SL)-Street Lighting cables** | 2027-01-05 → 2027-05-27 (+142d) | 2027-01-14 → 2027-06-06 (+143d) |  |  |  |
| RHD4CZ5RA07SL3100 | Excavation for Street Lighting Cables for Street Lighting Network - (ROUND-07)-Z5-RA07-SL | 2027-01-05 → 2027-05-27 (+142d) | 2027-01-07 → 2027-05-30 (+143d) |  |  |  |
| RHD4CZ5RA07SL3200 | Cable Laying of Street Lighting Cables for Street Lighting Network - (ROUND-07)-Z5-RA07-SL | 2027-01-09 → 2027-05-31 (+142d) | 2027-01-10 → 2027-06-01 (+142d) |  |  | resources Skilled labor [20.04 h]; Unskilled Labor [80.37 h]; Electrician [40.19 h]; Equipment Opreator [60.22 h]; Boom Truck [20.04 h]; Cable Laying Machine [40.19 h]; Cable, Copper 4x10mm2/ CU/XLPE/SWA/PVC + 1x10mm2 CU/PVC [332.03 m] → Skilled labor [20 h]; Unskilled Labor [80.37 h]; Electrician [40.19 h]; Equipment Opreator [60.22 h]; Boom Truck [20 h]; Cable Laying Machine [40.19 h]; Cable, Copper 4x10mm2/ CU/XLPE/SWA/PVC + 1x10mm2 CU/PVC [332.03 m] |
| RHD4CZ5RA07SL3300 | Warning tape and Backfill for Street Lighting Cables for Street Lighting Network - (ROUND-07)-Z5-RA07-SL | 2027-01-11 → 2027-06-02 (+142d) | 2027-01-12 → 2027-06-03 (+142d) |  |  | resources Skilled labor [20.04 h]; Unskilled Labor [80.37 h]; Electrician [40.19 h]; Equipment Opreator [20.04 h]; Boom Truck [20.04 h]; Cable, Copper 4x10mm2/ CU/XLPE/SWA/PVC + 1x10mm2 CU/PVC [83.01 m] → Skilled labor [20 h]; Unskilled Labor [80.37 h]; Electrician [40.19 h]; Equipment Opreator [20 h]; Boom Truck [20 h]; Cable, Copper 4x10mm2/ CU/XLPE/SWA/PVC + 1x10mm2 CU/PVC [83.01 m] |
| RHD4CZ5RA07SL3400 | Testing of Street Lighting Cables for Street Lighting Network - (ROUND-07)-Z5-RA07-SL | 2027-01-13 → 2027-06-05 (+143d) | 2027-01-14 → 2027-06-06 (+143d) |  |  |  |
| 4265 | **RHD4-02-002-RA07-(SL)-Street Lighting Poles** | 2027-01-16 → 2027-06-07 (+142d) | 2027-01-26 → 2027-06-17 (+142d) |  |  |  |
| RHD4CZ5RA07SL1100 | Excavation for RC Base for Lighting Poles for Street Lighting Network - (ROUND-07)-Z5-RA07-SL | 2027-01-16 → 2027-06-07 (+142d) | 2027-01-17 → 2027-06-08 (+142d) |  |  |  |
| RHD4CZ5RA07SL1200 | Installation for RC Base for Lighting Poles for Street Lighting Network - (ROUND-07)-Z5-RA07-SL | 2027-01-18 → 2027-06-09 (+142d) | 2027-01-19 → 2027-06-10 (+142d) |  |  |  |
| RHD4CZ5RA07SL1300 | Backfill for RC Base for Lighting Poles for Street Lighting Network - (ROUND-07)-Z5-RA07-SL | 2027-01-20 → 2027-06-12 (+143d) | 2027-01-21 → 2027-06-13 (+143d) |  |  |  |
| RHD4CZ5RA07SL1400 | Installation for Lighting Poles for Street Lighting Network - (ROUND-07)-Z5-RA07-SL | 2027-01-23 → 2027-06-14 (+142d) | 2027-01-24 → 2027-06-15 (+142d) |  |  |  |
| RHD4CZ5RA07SL1500 | Luminaire Installation for Lighting Poles for Street Lighting Network - (ROUND-07)-Z5-RA07-SL | 2027-01-25 → 2027-06-16 (+142d) | 2027-01-26 → 2027-06-17 (+142d) |  |  | resources Unskilled Labor [20.36 h]; Electrician [10.13 h]; Equipment Opreator [3.48 h]; Boom Truck [4.03 h]; Street Lighting( LED) Luminaire of Output ?18553 lumen [10 Unit]; Street Lighting( LED) Luminaire of Output ?10898 lumen [4 Unit] → Unskilled Labor [20.36 h]; Electrician [10.13 h]; Equipment Opreator [3.48 h]; Boom Truck [4 h]; Street Lighting( LED) Luminaire of Output ?18553 lumen [10 Unit]; Street Lighting( LED) Luminaire of Output ?10898 lumen [4 Unit] |
| 4266 | **RHD4-02-002-RA07-(SL)-Street Lighting Feeder Pillars** | 2027-01-13 → 2027-06-05 (+143d) | 2027-01-26 → 2027-06-17 (+142d) |  |  |  |
| RHD4CZ5RA07SL4100 | Leveling for Distribution Pillars for Street Lighting Network - (ROUND-07)-Z5-RA07-SL | 2027-01-13 → 2027-06-05 (+143d) | 2027-01-14 → 2027-06-06 (+143d) |  |  |  |
| RHD4CZ5RA07SL4200 | Lean Concrete for Distribution Pillars for Street Lighting Network - (ROUND-07)-Z5-RA07-SL | 2027-01-16 → 2027-06-07 (+142d) | 2027-01-17 → 2027-06-08 (+142d) |  |  |  |
| RHD4CZ5RA07SL4300 | Installation of Distribution Pillars for Street Lighting Network - (ROUND-07)-Z5-RA07-SL | 2027-01-25 → 2027-06-16 (+142d) | 2027-01-26 → 2027-06-17 (+142d) |  |  |  |
| 4267 | **RHD4-02-002-RA07-(SL)-Street Lighting Earthing System** | 2027-01-27 → 2027-06-19 (+143d) | 2027-01-28 → 2027-06-20 (+143d) |  |  |  |
| RHD4CZ5RA07SL6100 | Installation of Earthing for Lighting Poles and Fedder Pillers for Street Lighting Network - (ROUND-07)-Z5-RA07-SL | 2027-01-27 → 2027-06-19 (+143d) | 2027-01-28 → 2027-06-20 (+143d) |  |  | resources Skilled labor [0.76 h]; Unskilled Labor [0.76 h]; Equipment Opreator [1.42 h]; Excavator-Poclain [0.76 h]; Dump Truck [0.76 h]; Street Lighting Feeder pillars - ER [1 Unit] → Skilled labor [0.8 h]; Unskilled Labor [0.8 h]; Equipment Opreator [1.42 h]; Excavator-Poclain [0.8 h]; Dump Truck [0.8 h]; Street Lighting Feeder pillars - ER [1 Unit] |
| 4273 | **RHD4-02-002-Z5-RA07-Telecommunications Network - TC** | 2027-01-30 → 2027-06-21 (+142d) | 2027-02-14 → 2027-07-31 (+167d) |  |  |  |
| 4274 | **RHD4-02-002-RA07-(TC)-Telecommunications Ducts** | 2027-01-30 → 2027-06-21 (+142d) | 2027-02-09 → 2027-07-01 (+142d) |  |  |  |
| RHD4CZ5RA07TC2100 | Excavation of HDPE Ducts for Telecom Network - (ROUND-07)-Z5-RA07-TC | 2027-01-30 → 2027-06-21 (+142d) | 2027-02-01 → 2027-06-23 (+142d) |  |  |  |
| RHD4CZ5RA07TC2200 | Installation of HDPE Ducts for Telecom Network - (ROUND-07)-Z5-RA07-TC | 2027-02-02 → 2027-06-24 (+142d) | 2027-02-06 → 2027-06-28 (+142d) |  |  |  |
| RHD4CZ5RA07TC2400 | Backfilling of HDPE Ducts for Telecom Network - (ROUND-07)-Z5-RA07-TC | 2027-02-07 → 2027-06-29 (+142d) | 2027-02-09 → 2027-07-01 (+142d) |  |  |  |
| 4275 | **RHD4-02-002-RA07-(TC)-Telecommunications Manholes** | 2027-02-10 → 2027-07-27 (+167d) | 2027-02-14 → 2027-07-31 (+167d) |  |  |  |
| RHD4CZ5RA07TC5100 | Excavation for Manholes for Telecom Network - (ROUND-07)-Z5-RA07-TC | 2027-02-10 → 2027-07-27 (+167d) | 2027-02-11 → 2027-07-28 (+167d) |  |  |  |
| RHD4CZ5RA07TC5200 | Installation of Manholes for Telecom Network - (ROUND-07)-Z5-RA07-TC | 2027-02-13 → 2027-07-29 (+166d) | 2027-02-14 → 2027-07-31 (+167d) |  |  |  |
| 4277 | **RHD4-02-002-Z5-RA07-Information and Communication Technologies - ICT** | 2027-02-15 → 2027-08-01 (+167d) | 2027-03-03 → 2027-08-16 (+166d) |  |  |  |
| 4278 | **RHD4-02-002-RA07-(ICT)-Information and Communication Technologies Ducts** | 2027-02-15 → 2027-08-01 (+167d) | 2027-02-27 → 2027-08-11 (+165d) |  |  |  |
| RHD4CZ5RA07ICT2100 | Excavation of HDPE Ducts for ICT Network - (ROUND-07)-Z5-RA07-ICT | 2027-02-15 → 2027-08-01 (+167d) | 2027-02-17 → 2027-08-03 (+167d) |  |  |  |
| RHD4CZ5RA07ICT2200 | Installation of HDPE Ducts for ICT Network - (ROUND-07)-Z5-RA07-ICT | 2027-02-18 → 2027-08-04 (+167d) | 2027-02-23 → 2027-08-08 (+166d) |  |  |  |
| RHD4CZ5RA07ICT2400 | Backfilling of HDPE Ducts for ICT Network - (ROUND-07)-Z5-RA07-ICT | 2027-02-24 → 2027-08-09 (+166d) | 2027-02-27 → 2027-08-11 (+165d) |  |  |  |
| 4279 | **RHD4-02-002-RA07-(ICT)-Information and Communication Technologies Manholes** | 2027-02-28 → 2027-08-12 (+165d) | 2027-03-03 → 2027-08-16 (+166d) |  |  |  |
| RHD4CZ5RA07ICT5100 | Excavation for Manholes for ICT Network - (ROUND-07)-Z5-RA07-ICT | 2027-02-28 → 2027-08-12 (+165d) | 2027-03-01 → 2027-08-14 (+166d) |  |  |  |
| RHD4CZ5RA07ICT5200 | Installation of Manholes for ICT Network - (ROUND-07)-Z5-RA07-ICT | 2027-03-02 → 2027-08-15 (+166d) | 2027-03-03 → 2027-08-16 (+166d) |  |  |  |
| 4281 | **RHD4-02-002-Z5-RA07-Security Network - CCTV** | 2027-03-04 → 2027-08-17 (+166d) | 2027-04-13 → 2027-09-29 (+169d) |  |  |  |
| 4282 | **RHD4-02-002-RA07-(CCTV)-Civil Works** | 2027-03-04 → 2027-08-17 (+166d) | 2027-03-18 → 2027-08-28 (+163d) |  |  |  |
| RHD4CZ5RA07CCTV2100 | Civil Works for Security Network - (ROUND-07)-Z5-RA07-CCTV | 2027-03-04 → 2027-08-17 (+166d) | 2027-03-18 → 2027-08-28 (+163d) |  |  |  |
| 4283 | **RHD4-02-002-RA07-(CCTV)-CCTV Poles** | 2027-03-20 → 2027-08-29 (+162d) | 2027-03-30 → 2027-09-08 (+162d) |  |  |  |
| RHD4CZ5RA07CCTV1100 | Excavation for RC Base for CCTV Poles for Security Network - (ROUND-07)-Z5-RA07-CCTV | 2027-03-20 → 2027-08-29 (+162d) | 2027-03-21 → 2027-08-30 (+162d) |  |  |  |
| RHD4CZ5RA07CCTV1200 | Installation for RC Base for CCTV Poles for Security Network - (ROUND-07)-Z5-RA07-CCTV | 2027-03-22 → 2027-08-31 (+162d) | 2027-03-23 → 2027-09-01 (+162d) |  |  |  |
| RHD4CZ5RA07CCTV1300 | Backfill for RC Base for CCTV Poles for Security Network - (ROUND-07)-Z5-RA07-CCTV | 2027-03-24 → 2027-09-02 (+162d) | 2027-03-25 → 2027-09-04 (+163d) |  |  |  |
| RHD4CZ5RA07CCTV1400 | Installation for CCTV Poles for Security Network - (ROUND-07)-Z5-RA07-CCTV | 2027-03-27 → 2027-09-05 (+162d) | 2027-03-28 → 2027-09-06 (+162d) |  |  |  |
| RHD4CZ5RA07CCTV1500 | Protection post Installation for CCTV Poles for Security Network - (ROUND-07)-Z5-RA07-CCTV | 2027-03-29 → 2027-09-07 (+162d) | 2027-03-30 → 2027-09-08 (+162d) |  |  |  |
| 4284 | **RHD4-02-002-RA07-(CCTV)-Camera** | 2027-03-31 → 2027-09-09 (+162d) | 2027-04-01 → 2027-09-11 (+163d) |  |  |  |
| RHD4CZ5RA07CCTV3100 | Installation for Cameras for Security Network - (ROUND-07)-Z5-RA07-CCTV | 2027-03-31 → 2027-09-09 (+162d) | 2027-04-01 → 2027-09-11 (+163d) |  |  |  |
| 4285 | **RHD4-02-002-RA07-(CCTV)-Power and Infrastructure** | 2027-03-29 → 2027-09-07 (+162d) | 2027-04-01 → 2027-09-11 (+163d) |  |  |  |
| RHD4CZ5RA07CCTV4100 | Installation of Power outlet, UPS and midspan for PTZ Camerafor Cameras for Security Network - (ROUND-07)-Z5-RA07-CCTV | 2027-03-29 → 2027-09-07 (+162d) | 2027-03-30 → 2027-09-08 (+162d) |  |  |  |
| RHD4CZ5RA07CCTV4200 | Short Range Wireless PoP wireless Bridgefor CCTV Poles for Security Network - (ROUND-07)-Z5-RA07-CCTV | 2027-03-31 → 2027-09-09 (+162d) | 2027-04-01 → 2027-09-11 (+163d) |  |  |  |
| 4287 | **RHD4-02-002-RA07-(CCTV)-CCTV Panels and Components** | 2027-04-03 → 2027-09-12 (+162d) | 2027-04-13 → 2027-09-29 (+169d) |  |  |  |
| RHD4CZ5RA07CCTV6100 | Installation for CCTV Panels for Security Network - (ROUND-07)-Z5-RA07-CCTV | 2027-04-03 → 2027-09-12 (+162d) | 2027-04-13 → 2027-09-29 (+169d) | 10d → 15d |  |  |
| 4487 | **RHD4-02-002-Z5-C061** | 2026-07-12 → 2026-05-12 (-61d) | 2027-04-18 → 2027-10-18 (+183d) |  |  |  |
| 4666 | **RHD4-02-002-Z5-C061-Road Works - RD** | 2026-08-24 → 2026-05-12 (-104d) | 2027-04-18 → 2027-10-18 (+183d) |  |  |  |
| 4667 | **RHD4-02-002-C061-(RD)-Subgrade** | 2026-08-24 → 2026-05-12 (-104d) | 2026-08-31 → 2026-05-23 (-100d) |  |  |  |
| RHD4CZ5C061RD1100 | Supply, lay and compaction subgrade compacted thickness 300 mm for Roads - (RD-C-6 /1)-Z5-C061-RD | 2026-08-24 → 2026-05-12 A (-104d) | 2026-08-31 → 2026-05-23 A (-100d) |  | 0% → 100% |  |
| 4668 | **RHD4-02-002-C061-(RD)-Aggregate Base Course** | 2026-09-01 → 2027-02-28 (+180d) | 2026-09-05 → 2027-03-03 (+179d) |  |  |  |
| RHD4CZ5C061RD2100 | Supply, lay and compaction Aggregate base course compacted thickness 300 mmfor Roads - (RD-C-6 /1)-Z5-C061-RD | 2026-09-01 → 2027-02-28 (+180d) | 2026-09-05 → 2027-03-03 (+179d) |  |  |  |
| 4669 | **RHD4-02-002-C061-(RD)-Bituminous base course Two Layers, including (MC1)&(RC2)** | 2026-09-06 → 2027-03-04 (+179d) | 2027-04-05 → 2027-10-05 (+183d) |  |  |  |
| RHD4CZ5C061RD3100 | Supply, lay and Asphaltic base course including Prime Coat (MC1) for 1st Layer - (RD-C-6 /1)-Z5-C061-RD | 2026-09-06 → 2027-03-04 (+179d) | 2026-09-07 → 2027-03-06 (+180d) |  |  |  |
| RHD4CZ5C061RD3200 | Supply, lay and Asphaltic base course including Tack Coat (RC2) for 2nd Layer - (RD-C-6 /1)-Z5-C061-RD | 2027-04-04 → 2027-10-04 (+183d) | 2027-04-05 → 2027-10-05 (+183d) |  |  |  |
| 4671 | **RHD4-02-002-C061-(RD)-Precast Concrete Curb** | 2027-04-06 → 2027-10-06 (+183d) | 2027-04-11 → 2027-10-11 (+183d) |  |  |  |
| RHD4CZ5C061RD5100 | Supply and installation Precast Concrete Kerb for Roads - (RD-C-6 /1)-Z5-C061-RD | 2027-04-06 → 2027-10-06 (+183d) | 2027-04-11 → 2027-10-11 (+183d) |  |  |  |
| 4674 | **RHD4-02-002-C061-(RD)-Traffic Signage** | 2027-04-12 → 2027-10-12 (+183d) | 2027-04-18 → 2027-10-18 (+183d) |  |  |  |
| RHD4CZ5C061RD8100 | Installation of Traffic Signage for Road Network - (RD-C-6 /1)-Z5-C061-RD | 2027-04-12 → 2027-10-12 (+183d) | 2027-04-18 → 2027-10-18 (+183d) |  |  |  |
| 4670 | **RHD4-02-002-C061-(RD)-Bituminous concrete wearing course including tack coat (RC2)** | 2027-04-12 → 2027-10-12 (+183d) | 2027-04-13 → 2027-10-13 (+183d) |  |  |  |
| RHD4CZ5C061RD4100 | Supply, lay and compaction Asphaltic wearing course including tack Coat (RC2)for Road Network - (RD-C-6 /1)-Z5-C061-RD | 2027-04-12 → 2027-10-12 (+183d) | 2027-04-13 → 2027-10-13 (+183d) |  |  | resources Skilled labor [6.75 h]; Unskilled Labor [40.62 h]; Equipment Opreator [101.61 h]; Bobcat [6.75 h]; Roller compactor [6.75 h]; Asphalt Paver [6.75 h]; Rubber Compactor [13.5 h]; MC1/RC2 Sprinkler [6.75 h]; Dump Truck [60.99 h]; Bituminous concrete wearing course, (Grading I - Class A), including tack coat (RC2) [322.98 m3] → Skilled labor [6.75 h]; Unskilled Labor [40.62 h]; Equipment Opreator [101.6 h]; Bobcat [6.75 h]; Roller compactor [6.75 h]; Asphalt Paver [6.75 h]; Rubber Compactor [13.5 h]; MC1/RC2 Sprinkler [6.75 h]; Dump Truck [60.99 h]; Bituminous concrete wearing course, (Grading I - Class A), including tack coat (RC2) [322.98 m3] |
| 4673 | **RHD4-02-002-C061-(RD)-Pavement Marking** | 2027-04-14 → 2027-10-14 (+183d) | 2027-04-18 → 2027-10-18 (+183d) |  |  |  |
| RHD4CZ5C061RD7100 | Pavement Markings for Road Network - (RD-C-6 /1)-Z5-C061-RD | 2027-04-14 → 2027-10-14 (+183d) | 2027-04-18 → 2027-10-18 (+183d) |  |  |  |
| 4491 | **RHD4-02-002-Z5-C061-Storm Network - ST** | 2026-07-28 → 2026-08-01 (+4d) | 2026-08-20 → 2027-02-20 (+184d) |  |  |  |
| 4509 | **RHD4-02-002-C061-(ST)-MH Works - 1500 mm diameter** | 2026-07-28 → 2026-08-04 (+7d) | 2026-08-12 → 2027-02-14 (+186d) |  |  |  |
| RHD4CZ5C061ST3101 | Excavation and PC Blinding works for MH 1500 mm - (RD-C-6 /1)-Z5-C061-ST | 2026-07-28 → 2026-08-04 A (+7d) | 2026-07-30 → 2027-02-01 (+186d) |  | 0% → 73% |  |
| RHD4CZ5C061ST3201 | Installation of Base for MH 1500 mm - (RD-C-6 /1)-Z5-C061-ST | 2026-08-01 → 2026-08-06 A (+5d) | 2026-08-03 → 2027-02-04 (+185d) |  | 0% → 37% |  |

| ID | Task | Start | Finish | Duration | Complete | Other |
| --- | --- | --- | --- | --- | --- | --- |
| RHD4CZ5C061ST3301 | MH Ring and C.Slab works and Backfilling works for MH 1500 mm - (RD-C-6 /1)-Z5-C061-ST | 2026-08-04 → 2027-02-06 (+186d) | 2026-08-06 → 2027-02-08 (+186d) |  |  |  |
| RHD4CZ5C061ST3401 | Steel Cover for MH 1500 mm - (RD-C-6 /1)-Z5-C061-ST | 2026-08-08 → 2027-02-09 (+185d) | 2026-08-09 → 2027-02-10 (+185d) |  |  |  |
| RHD4CZ5C061ST3501 | Finishing, Benching, Testing works for MH 1500 mm - (RD-C-6 /1)-Z5-C061-ST | 2026-08-10 → 2027-02-11 (+185d) | 2026-08-12 → 2027-02-14 (+186d) |  |  |  |
| 3752 | **RHD4-02-002-L016-(ST)-MH Works - 1200 mm diameter** |  | 2026-08-11 → 2027-02-10 (+183d) |  |  |  |
| RHD4CZ5C061ST3100 | Excavation and PC Blinding works for MH 1200 mm - (RD-C-6 /1)-Z5-C061-ST | 2026-08-01 A | 2026-08-02 → 2026-08-06 A (+4d) |  | 0% → 100% |  |
| RHD4CZ5C061ST3200 | Installation of Base for MH 1200 mm - (RD-C-6 /1)-Z5-C061-ST | 2026-08-03 → 2026-08-06 A (+3d) | 2026-08-04 → 2027-02-03 (+183d) |  | 0% → 33% |  |
| RHD4CZ5C061ST3300 | MH Ring and C.Slab works and Backfilling works for MH 1200 mm - (RD-C-6 /1)-Z5-C061-ST | 2026-08-05 → 2027-02-04 (+183d) | 2026-08-06 → 2027-02-06 (+184d) |  |  |  |
| RHD4CZ5C061ST3400 | Steel Cover for MH 1200 mm - (RD-C-6 /1)-Z5-C061-ST | 2026-08-08 → 2027-02-07 (+183d) | 2026-08-09 → 2027-02-08 (+183d) |  |  |  |
| RHD4CZ5C061ST3500 | Finishing, Benching, Testing works for MH 1200 mm - (RD-C-6 /1)-Z5-C061-ST | 2026-08-10 → 2027-02-09 (+183d) | 2026-08-11 → 2027-02-10 (+183d) |  |  |  |
| 1844 | **RHD4-02-002-L016-(ST)-GRP Pipes - 400 mm diameter** | 2026-08-08 → 2026-08-04 (-4d) | 2026-08-18 → 2027-02-17 (+183d) |  |  |  |
| RHD4CZ5C061ST1100 | Excavation works for GRP Pipe Line 400 mm - (RD-C-6 /1)-Z5-C061-ST | 2026-08-08 → 2026-08-04 A (-4d) | 2026-08-09 → 2027-02-08 (+183d) |  | 0% → 87% | resources Skilled labor [8.39 h]; Unskilled Labor [8.39 h]; Equipment Opreator [10.02 h]; Excavator-Poclain [8.39 h]; Dump Truck [1.63 h]; GRP (400mm Diameter) - ST - Depth less than 1.5 m [17.54 m]; GRP (400mm Diameter) - ST - Depth: 1.51m - 2.5 m → Skilled labor [8.39 h]; Unskilled Labor [8.39 h]; Equipment Opreator [10.02 h]; Excavator-Poclain [8.39 h]; Dump Truck [1.6 h]; GRP (400mm Diameter) - ST - Depth less than 1.5 m [17.54 m]; GRP (400mm Diameter) - ST - Depth: 1.51m - 2.5 m |
| RHD4CZ5C061ST1200 | Bedding works for GRP Pipe Line 400 mm - (RD-C-6 /1)-Z5-C061-ST | 2026-08-10 → 2026-08-06 A (-4d) | 2026-08-11 → 2027-02-10 (+183d) |  | 0% → 84% |  |
| RHD4CZ5C061ST1300 | Installing for GRP Pipe Line 400 mm - (RD-C-6 /1)-Z5-C061-ST | 2026-08-12 → 2026-08-08 A (-4d) | 2026-08-13 → 2027-02-13 (+184d) |  | 0% → 83% |  |
| RHD4CZ5C061ST1500 | Backfilling and warning tape works for GRP Pipe Line 400 mm - (RD-C-6 /1)-Z5-C061-ST | 2026-08-17 → 2026-08-10 A (-7d) | 2026-08-18 → 2027-02-17 (+183d) |  | 0% → 84% | resources Skilled labor [9.58 h]; Unskilled Labor [19.06 h]; Equipment Opreator [19.06 h]; Excavator-Poclain [9.58 h]; Dump Truck [9.58 h]; GRP (400mm Diameter) - ST - Depth less than 1.5 m [35.09 m]; GRP (400mm Diameter) - ST - Depth: 1.51m - 2.5 m → Skilled labor [9.6 h]; Unskilled Labor [19.06 h]; Equipment Opreator [19.06 h]; Excavator-Poclain [9.6 h]; Dump Truck [9.6 h]; GRP (400mm Diameter) - ST - Depth less than 1.5 m [35.09 m]; GRP (400mm Diameter) - ST - Depth: 1.51m - 2.5 m |
| RHD4CZ5C061ST1400 | Primary Test for GRP Pipe Line 400 mm - (RD-C-6 /1)-Z5-C061-ST | 2026-08-15 → 2027-02-14 (+183d) | 2026-08-16 → 2027-02-15 (+183d) |  |  |  |
| 3739 | **RHD4-02-002-L016-(ST)-GRP Pipes - 700 mm diameter** | 2026-08-03 → 2026-08-04 (+1d) | 2026-08-13 → 2027-02-15 (+186d) |  |  |  |
| RHD4CZ5C061ST1103 | Excavation works for GRP Pipe Line 700 mm - (RD-C-6 /1)-Z5-C061-ST | 2026-08-03 → 2026-08-04 A (+1d) | 2026-08-04 → 2027-02-06 (+186d) |  | 0% → 66% |  |
| RHD4CZ5C061ST1203 | Bedding works for GRP Pipe Line 700 mm - (RD-C-6 /1)-Z5-C061-ST | 2026-08-05 → 2026-08-06 A (+1d) | 2026-08-06 → 2027-02-08 (+186d) |  | 0% → 66% |  |
| RHD4CZ5C061ST1303 | Installing for GRP Pipe Line 700 mm - (RD-C-6 /1)-Z5-C061-ST | 2026-08-08 A | 2026-08-09 → 2027-02-10 (+185d) |  | 0% → 66% |  |
| RHD4CZ5C061ST1503 | Backfilling and warning tape works for GRP Pipe Line 700 mm - (RD-C-6 /1)-Z5-C061-ST | 2026-08-12 → 2026-08-10 A (-2d) | 2026-08-13 → 2027-02-15 (+186d) |  | 0% → 66% |  |
| RHD4CZ5C061ST1403 | Primary Test for GRP Pipe Line 700 mm - (RD-C-6 /1)-Z5-C061-ST | 2026-08-10 → 2027-02-11 (+185d) | 2026-08-11 → 2027-02-13 (+186d) |  |  |  |
| 4496 | **RHD4-02-002-C061-(ST)-GRP Pipes - 800 mm diameter** | 2026-08-01 → 2027-02-02 (+185d) | 2026-08-11 → 2027-02-13 (+186d) |  |  |  |
| RHD4CZ5C061ST1104 | Excavation works for GRP Pipe Line 800 mm - (RD-C-6 /1)-Z5-C061-ST | 2026-08-01 → 2027-02-02 (+185d) | 2026-08-02 → 2027-02-03 (+185d) |  |  |  |
| RHD4CZ5C061ST1204 | Bedding works for GRP Pipe Line 800 mm - (RD-C-6 /1)-Z5-C061-ST | 2026-08-03 → 2027-02-04 (+185d) | 2026-08-04 → 2027-02-06 (+186d) |  |  |  |
| RHD4CZ5C061ST1304 | Installing for GRP Pipe Line 800 mm - (RD-C-6 /1)-Z5-C061-ST | 2026-08-05 → 2027-02-07 (+186d) | 2026-08-06 → 2027-02-08 (+186d) |  |  |  |
| RHD4CZ5C061ST1404 | Primary Test for GRP Pipe Line 800 mm - (RD-C-6 /1)-Z5-C061-ST | 2026-08-08 → 2027-02-09 (+185d) | 2026-08-09 → 2027-02-10 (+185d) |  |  |  |
| RHD4CZ5C061ST1504 | Backfilling and warning tape works for GRP Pipe Line 800 mm - (RD-C-6 /1)-Z5-C061-ST | 2026-08-10 → 2027-02-11 (+185d) | 2026-08-11 → 2027-02-13 (+186d) |  |  |  |
| 4506 | **RHD4-02-002-C061-(ST)-UPVC Pipes - 300 mm diameter** | 2026-08-08 → 2027-02-09 (+185d) | 2026-08-20 → 2027-02-20 (+184d) |  |  |  |
| RHD4CZ5C061ST2100 | Excavation works for UPVC Pipe Line 300 mm - (RD-C-6 /1)-Z5-C061-ST | 2026-08-08 → 2027-02-09 (+185d) | 2026-08-09 → 2027-02-10 (+185d) |  |  |  |
| RHD4CZ5C061ST2200 | Bedding works for UPVC Pipe Line 300 mm - (RD-C-6 /1)-Z5-C061-ST | 2026-08-10 → 2027-02-11 (+185d) | 2026-08-11 → 2027-02-13 (+186d) |  |  |  |
| RHD4CZ5C061ST2300 | Installing for UPVC Pipe Line 300 mm - (RD-C-6 /1)-Z5-C061-ST | 2026-08-12 → 2027-02-14 (+186d) | 2026-08-13 → 2027-02-15 (+186d) |  |  |  |
| RHD4CZ5C061ST2400 | Primary Test for UPVC Pipe Line 300 mm - (RD-C-6 /1)-Z5-C061-ST | 2026-08-15 → 2027-02-16 (+185d) | 2026-08-16 → 2027-02-17 (+185d) |  |  | resources Unskilled Labor [7.19 h]; Plumber [7.19 h]; Equipment Opreator [7.19 h]; Water Truck [7.19 h]; UPVC (300mm Diameter) - ST - Depth less than 1.5 [53.06 m]; UPVC (300mm Diameter) - ST - Depth: 1.51m - 2.5m → Unskilled Labor [7.2 h]; Plumber [7.2 h]; Equipment Opreator [7.2 h]; Water Truck [7.2 h]; UPVC (300mm Diameter) - ST - Depth less than 1.5 [53.06 m]; UPVC (300mm Diameter) - ST - Depth: 1.51m - 2.5m |
| RHD4CZ5C061ST2500 | Backfilling and warning tape works for UPVC Pipe Line 300 mm - (RD-C-6 /1)-Z5-C061-ST | 2026-08-19 → 2027-02-18 (+183d) | 2026-08-20 → 2027-02-20 (+184d) |  |  |  |
| 4514 | **RHD4-02-002-C061-(ST)-Concrete Encasement** | 2026-08-12 → 2027-02-14 (+186d) | 2026-08-13 → 2027-02-15 (+186d) |  |  |  |
| RHD4CZ5C061ST6100 | Pipe Encasement for Storm Pipelines - (RD-C-6 /1)-Z5-C061-ST | 2026-08-12 → 2027-02-14 (+186d) | 2026-08-13 → 2027-02-15 (+186d) |  |  |  |
| 4515 | **RHD4-02-002-Z5-C061-Catch Basin - ST** | 2026-08-08 → 2026-08-29 (+21d) | 2026-08-19 → 2027-02-21 (+186d) |  |  |  |
| 4516 | **RHD4-02-002-C061-(ST)-Single Catch Basin Works** | 2026-08-08 → 2026-08-29 (+21d) | 2026-08-19 → 2027-02-21 (+186d) |  |  |  |
| RHD4CZ5C061ST7100 | Excavation works for Single Catch Basin - (RD-C-6 /1)-Z5-C061-ST | 2026-08-08 → 2026-08-29 A (+21d) | 2026-08-09 → 2027-02-10 (+185d) |  | 0% → 7% |  |
| RHD4CZ5C061ST7200 | PC Blinding, Installation and Pipe connection for Single Catch Basin - (RD-C-6 /1)-Z5-C061-ST | 2026-08-10 → 2026-08-31 A (+21d) | 2026-08-11 → 2027-02-13 (+186d) |  | 0% → 7% |  |
| RHD4CZ5C061ST7300 | Rings & C.Slab & Final Backfill for Single Catch Basin - (RD-C-6 /1)-Z5-C061-ST | 2026-08-12 → 2027-02-14 (+186d) | 2026-08-13 → 2027-02-15 (+186d) |  |  |  |
| RHD4CZ5C061ST7400 | Steel Cover for Single Catch Basin - (RD-C-6 /1)-Z5-C061-ST | 2026-08-15 → 2027-02-16 (+185d) | 2026-08-16 → 2027-02-17 (+185d) |  |  |  |
| RHD4CZ5C061ST7500 | Finishing and Insulation works for Single Catch Basin - (RD-C-6 /1)-Z5-C061-ST | 2026-08-17 → 2027-02-18 (+185d) | 2026-08-19 → 2027-02-21 (+186d) |  |  |  |
| 4299 | **RHD4-02-002-Z5-C061-Concrete Box Culvert - ST** | 2026-07-12 → 2026-06-11 (-31d) | 2026-09-03 → 2027-01-09 (+128d) |  |  |  |
| 4300 | **RHD4-02-002-L061-(ST)-Concrete Box Culvert** | 2026-07-12 → 2026-06-11 (-31d) | 2026-09-03 → 2026-10-18 (+45d) |  |  |  |
| RHD4CZ5C061ST4100 | Excavation works for Box Culvert - (RD-C-6/1)-Z5-C061-ST(Completed) | 2026-07-12 → 2026-06-11 A (-31d) | 2026-07-21 → 2026-06-13 A (-38d) |  | 0% → 100% |  |
| RHD4CZ5C061ST4200 | PC works for Box Culvert - (RD-C-6/1)-Z5-C061-ST(Completed) | 2026-07-22 → 2026-06-15 A (-37d) | 2026-07-27 → 2026-06-18 A (-39d) |  | 0% → 100% |  |
| RHD4CZ5C061ST4400 | Raft works for Box Culvert - (RD-C-6/1)-Z5-C061-ST(Completed) | 2026-07-28 → 2026-07-11 A (-17d) | 2026-08-04 → 2026-07-16 A (-19d) |  | 0% → 100% |  |
| RHD4CZ5C061ST4500 | Wall and slab works for Box Culvert - (RD-C-6/1)-Z5-C061-ST | 2026-08-05 → 2026-08-04 A (-1d) | 2026-08-10 → 2026-09-20 A (+41d) |  | 0% → 100% | resources Carpenter [38.23 h]; Skilled labor [46.28 h]; Steel Fixer [8.17 h]; Equipment Opreator [77.97 h]; Boom Truck [1.63 h]; Concrete Mixer Truck [38.23 h]; Concrete Pump [38.23 h]; Supply and cast in place reinforced concrete for Box culverts - ST [350.73 m3]; Supply, placing, and fixing of high tensile reinforcement steel for Box culverts - ST [89.46 Ton] → Carpenter [38.23 h]; Skilled labor [46.28 h]; Steel Fixer [8.17 h]; Equipment Opreator [77.97 h]; Boom Truck [1.6 h]; Concrete Mixer Truck [38.23 h]; Concrete Pump [38.23 h]; Supply and cast in place reinforced concrete for Box culverts - ST [350.73 m3]; Supply, placing, and fixing of high tensile reinforcement steel for Box culverts - ST [89.46 Ton] |
| RHD4CZ5C061ST4600 | Insulation and Testing for Box Culvert - (RD-C-6/1)-Z5-C061-ST | 2026-08-31 → 2026-09-19 A (+19d) | 2026-09-03 → 2026-09-30 A (+27d) |  | 0% → 100% |  |
| RHD4CZ5C061ST4700 | Backfilling works for Box Culvert - (RD-C-6/1)-Z5-C061-ST | 2026-08-18 → 2026-10-01 A (+44d) | 2026-08-30 → 2026-10-18 A (+49d) | 11d → 15d | 0% → 100% | resources Skilled labor [159.65 h]; Unskilled Labor [319.2 h]; Equipment Opreator [255.38 h]; Boom Truck [79.83 h]; Water Truck [16.01 h]; Dump Truck [159.65 h]; Excavation for culverts (all types of soil) including backfilling - ST [879.44 m3] → Skilled labor [159.65 h]; Unskilled Labor [319.2 h]; Equipment Opreator [255.38 h]; Boom Truck [79.83 h]; Water Truck [16 h]; Dump Truck [159.65 h]; Excavation for culverts (all types of soil) including backfilling - ST [879.44 m3] |
| 4301 | **RHD4-02-002-L061-(ST)-Concrete Chambers** | 2026-08-11 → 2026-08-20 (+9d) | 2026-08-19 → 2027-01-09 (+143d) |  |  |  |
| RHD4CZ5C061ST5100 | Excavation and Bedding for Concrete Chambers - for Box Culvert - (RD-C-6/1)-Z5-C061-ST | 2026-08-11 → 2026-08-20 A (+9d) | 2026-08-12 → 2027-01-02 (+143d) |  | 0% → 50% |  |
| RHD4CZ5C061ST5200 | PC works for Concrete Chambers - for Box Culvert - (RD-C-6/1)-Z5-C061-ST | 2026-08-13 → 2026-08-25 A (+12d) | 2026-08-15 → 2027-01-04 (+142d) |  | 0% → 50% |  |
| RHD4CZ5C061ST5300 | Installation for Concrete Chambers - for Box Culvert - (RD-C-6/1)-Z5-C061-ST | 2026-08-16 → 2026-08-30 A (+14d) | 2026-08-17 → 2027-01-06 (+142d) |  | 0% → 50% |  |
| RHD4CZ5C061ST5400 | Backfilling works for Concrete Chambers - for Box Culvert - (RD-C-6/1)-Z5-C061-ST | 2026-08-18 → 2027-01-07 (+142d) | 2026-08-19 → 2027-01-09 (+143d) |  |  |  |
| 4540 | **RHD4-02-002-Z5-C061-Sewage Network - SW** | 2026-08-12 → 2026-08-09 (-3d) | 2026-09-17 → 2027-03-21 (+185d) |  |  |  |
| 1 | **Missing ID** | 2026-08-19 → 2027-02-21 (+186d) | 2026-09-08 → 2027-03-04 (+177d) |  |  |  |
| RHD4CZ5C061SW4100 | Excavation and Bedding for Wash out Chamber for HDPE force Main - (RD-C-6 /1)-Z5-C061-SW | 2026-08-19 → 2027-02-21 (+186d) | 2026-08-20 → 2027-02-22 (+186d) |  |  |  |
| RHD4CZ5C061SW4200 | PC works for Wash out Chamber for HDPE force Main - (RD-C-6 /1)-Z5-C061-SW | 2026-08-21 → 2027-02-23 (+186d) | 2026-08-22 → 2027-02-24 (+186d) |  |  |  |
| RHD4CZ5C061SW4300 | Installation for Wash out Chamber for HDPE force Main - (RD-C-6 /1)-Z5-C061-SW | 2026-08-23 → 2027-02-25 (+186d) | 2026-08-24 → 2027-02-26 (+186d) |  |  |  |
| RHD4CZ5C061SW4400 | Backfilling works for Wash out Chamber for HDPE force Main - (RD-C-6 /1)-Z5-C061-SW | 2026-08-25 → 2027-02-27 (+186d) | 2026-08-26 → 2027-02-28 (+186d) |  |  |  |
| RHD4CZ5C061SW5100 | Installation for Wash out Valves for HDPE force Main - (RD-C-6 /1)-Z5-C061-SW | 2026-08-27 → 2027-03-01 (+186d) | 2026-08-28 → 2027-03-02 (+186d) |  |  |  |
| RHD4CZ5C061SW5200 | Stem and Service box for Wash out Valves for HDPE force Main - (RD-C-6 /1)-Z5-C061-SW | 2026-09-07 → 2027-03-03 (+177d) | 2026-09-08 → 2027-03-04 (+177d) |  |  |  |
| 4358 | **RHD4-02-002-C061-(SW)-HDPE Pipes - 250 mm diameter** | 2026-08-17 → 2027-02-18 (+185d) | 2026-09-06 → 2027-03-02 (+177d) |  |  |  |
| RHD4CZ5C061SW2600 | Excavation works for HDPE Force Main Pipeline 250 mm - (RD-C-6 /1)-Z5-C061-SW | 2026-08-17 → 2027-02-18 (+185d) | 2026-08-18 → 2027-02-20 (+186d) |  |  |  |
| RHD4CZ5C061SW2700 | Bedding works for HDPE Force Main Pipeline 250 mm - (RD-C-6 /1)-Z5-C061-SW | 2026-08-19 → 2027-02-21 (+186d) | 2026-08-20 → 2027-02-23 (+187d) |  |  |  |
| RHD4CZ5C061SW2800 | Installing for HDPE Force Main Pipeline 250 mm - (RD-C-6 /1)-Z5-C061-SW | 2026-08-22 → 2027-02-24 (+186d) | 2026-08-23 → 2027-02-25 (+186d) |  |  |  |
| RHD4CZ5C061SW2900 | Primary Test for HDPE Force Main Pipeline 250 mm - (RD-C-6 /1)-Z5-C061-SW | 2026-08-24 → 2027-02-27 (+187d) | 2026-08-25 → 2027-02-28 (+187d) |  |  |  |
| RHD4CZ5C061SW3000 | Backfilling and warning tape works for HDPE Force Main Pipeline 250 mm - (RD-C-6 /1)-Z5-C061-SW | 2026-09-05 → 2027-03-01 (+177d) | 2026-09-06 → 2027-03-02 (+177d) |  |  |  |
| 4550 | **RHD4-02-002-C061-(SW)-MH Works - 1200 mm diameter** | 2026-08-12 → 2026-08-15 (+3d) | 2026-09-13 → 2027-03-18 (+186d) |  |  |  |

| ID | Task | Start | Finish | Complete | Other |
| --- | --- | --- | --- | --- | --- |
| RHD4CZ5C061SW3100 | Excavation and PC Blinding works for MH 1200 mm - (RD-C-6 /1)-Z5-C061-SW | 2026-08-12 → 2026-08-15 A (+3d) | 2026-08-16 → 2027-02-17 (+185d) | 0% → 70% |  |
| RHD4CZ5C061SW3200 | Installation of Base for MH 1200 mm - (RD-C-6 /1)-Z5-C061-SW | 2026-08-17 A | 2026-08-24 → 2027-02-23 (+183d) | 0% → 50% |  |
| RHD4CZ5C061SW3300 | MH Ring and C.Slab works and Backfilling works for MH 1200 mm - (RD-C-6 /1)-Z5-C061-SW | 2026-08-25 → 2027-02-24 (+183d) | 2026-09-01 → 2027-03-03 (+183d) |  |  |
| RHD4CZ5C061SW3400 | Steel Cover for MH 1200 mm - (RD-C-6 /1)-Z5-C061-SW | 2026-09-02 → 2027-03-04 (+183d) | 2026-09-05 → 2027-03-07 (+183d) |  |  |
| RHD4CZ5C061SW3500 | Finishing, Benching, Testing works for MH 1200 mm - (RD-C-6 /1)-Z5-C061-SW | 2026-09-06 → 2027-03-08 (+183d) | 2026-09-13 → 2027-03-18 (+186d) |  | resources Skilled labor [70.79 h]; Unskilled Labor [141.57 h]; Plumber [70.79 h]; Equipment Opreator [14.16 h]; Water Truck [14.16 h]; MH (1200mm Diameter) - SW - depth 1.51 - 2.5m [0.3 nr]; MH (1200mm Diameter) - SW - depth 2.51 - 3.5m [0.3 nr]; MH (1200mm Diameter) - SW - depth 3.51 -4.5m [0.2 nr] → Skilled labor [70.79 h]; Unskilled Labor [141.6 h]; Plumber [70.79 h]; Equipment Opreator [14.16 h]; Water Truck [14.16 h]; MH (1200mm Diameter) - SW - depth 1.51 - 2.5m [0.3 nr]; MH (1200mm Diameter) - SW - depth 2.51 - 3.5m [0.3 nr]; MH (1200mm Diameter) - SW - depth 3.51 -4.5m [0.2 nr] |
| 4551 | **RHD4-02-002-C061-(SW)-MH Works - 1200 mm diameter with Back drop** | 2026-08-17 → 2026-08-09 (-8d) | 2026-09-15 → 2027-03-21 (+187d) |  |  |
| RHD4CZ5C061SW3101 | Excavation and PC Blinding works for MH 1200 mm - (RD-C-6 /1)-Z5-C061-SW | 2026-08-17 → 2026-08-09 A (-8d) | 2026-08-18 → 2026-08-10 A (-8d) | 0% → 100% |  |
| RHD4CZ5C061SW3201 | Installation of Base for MH 1200 mm - (RD-C-6 /1)-Z5-C061-SW | 2026-08-19 → 2026-08-12 A (-7d) | 2026-08-20 → 2026-08-13 A (-7d) | 0% → 100% |  |
| RHD4CZ5C061SW3301 | MH Ring and C.Slab works and Backfilling works for MH 1200 mm - (RD-C-6 /1)-Z5-C061-SW | 2026-08-22 → 2027-02-18 (+180d) | 2026-08-23 → 2027-02-20 (+181d) |  |  |
| RHD4CZ5C061SW3401 | Steel Cover for MH 1200 mm - (RD-C-6 /1)-Z5-C061-SW | 2026-09-06 → 2027-03-08 (+183d) | 2026-09-07 → 2027-03-13 (+187d) |  | resources Skilled labor [3.59 h]; Unskilled Labor [7.3 h]; Equipment Opreator [0.76 h]; Boom Truck [0.76 h]; MH (1200mm Diameter) - SW - depth 3.51 -4.5 m with back drop [0.05 nr] → Skilled labor [3.59 h]; Unskilled Labor [7.3 h]; Equipment Opreator [0.8 h]; Boom Truck [0.8 h]; MH (1200mm Diameter) - SW - depth 3.51 -4.5 m with back drop [0.05 nr] |
| RHD4CZ5C061SW3501 | Finishing, Benching, Testing works for MH 1200 mm - (RD-C-6 /1)-Z5-C061-SW | 2026-09-14 → 2027-03-20 (+187d) | 2026-09-15 → 2027-03-21 (+187d) |  |  |
| 4542 | **RHD4-02-002-C061-(SW)-GRP Pipes - 400 mm diameter** | 2026-09-02 → 2026-09-15 (+13d) | 2026-09-13 → 2027-03-18 (+186d) |  |  |
| RHD4CZ5C061SW1101 | Excavation works for GRP Pipe Line 400 mm - (RD-C-6 /1)-Z5-C061-SW | 2026-09-02 → 2026-09-15 A (+13d) | 2026-09-03 → 2027-03-06 (+184d) |  |  |
| RHD4CZ5C061SW1201 | Bedding works for GRP Pipe Line 400 mm - (RD-C-6 /1)-Z5-C061-SW | 2026-09-05 → 2027-03-07 (+183d) | 2026-09-06 → 2027-03-08 (+183d) |  | resources Skilled labor [8.06 h]; Unskilled Labor [16.01 h]; Equipment Opreator [16.01 h]; Excavator-Poclain [8.06 h]; Dump Truck [8.06 h]; GRP (400mm Diameter) - SW - Depth: less than 2.5m [10.04 m]; GRP (400mm Diameter) - SW - Depth: 2.51m - 3.5m → Skilled labor [8.06 h]; Unskilled Labor [16 h]; Equipment Opreator [16 h]; Excavator-Poclain [8.06 h]; Dump Truck [8.06 h]; GRP (400mm Diameter) - SW - Depth: less than 2.5m [10.04 m]; GRP (400mm Diameter) - SW - Depth: 2.51m - 3.5m |
| RHD4CZ5C061SW1301 | Installing for GRP Pipe Line 400 mm - (RD-C-6 /1)-Z5-C061-SW | 2026-09-07 → 2027-03-13 (+187d) | 2026-09-08 → 2027-03-14 (+187d) |  |  |
| RHD4CZ5C061SW1401 | Primary Test for GRP Pipe Line 400 mm - (RD-C-6 /1)-Z5-C061-SW | 2026-09-09 → 2027-03-15 (+187d) | 2026-09-10 → 2027-03-16 (+187d) |  |  |
| RHD4CZ5C061SW1501 | Backfilling and warning tape works for GRP Pipe Line 400 mm - (RD-C-6 /1)-Z5-C061-SW | 2026-09-12 → 2027-03-17 (+186d) | 2026-09-13 → 2027-03-18 (+186d) |  |  |
| 4541 | **RHD4-02-002-C061-(SW)-GRP Pipes - 300 mm diameter** |  | 2026-09-15 → 2027-03-18 (+184d) |  |  |
| RHD4CZ5C061SW1100 | Excavation works for GRP Pipe Line 300 mm - (RD-C-6 /1)-Z5-C061-SW | 2026-09-05 A | 2026-09-06 → 2026-09-16 A (+10d) | 0% → 100% | resources Skilled labor [3.7 h]; Unskilled Labor [3.7 h]; Equipment Opreator [4.36 h]; Excavator-Poclain [3.7 h]; Dump Truck [0.76 h]; GRP (300mm Diameter) - SW - Depth: 2.51m - 3.5m [7.59 m] → Skilled labor [3.7 h]; Unskilled Labor [3.7 h]; Equipment Opreator [4.36 h]; Excavator-Poclain [3.7 h]; Dump Truck [0.8 h]; GRP (300mm Diameter) - SW - Depth: 2.51m - 3.5m [7.59 m] |
| RHD4CZ5C061SW1200 | Bedding works for GRP Pipe Line 300 mm - (RD-C-6 /1)-Z5-C061-SW | 2026-09-07 A | 2026-09-08 → 2026-09-17 A (+9d) | 0% → 100% |  |
| RHD4CZ5C061SW1300 | Installing for GRP Pipe Line 300 mm - (RD-C-6 /1)-Z5-C061-SW | 2026-09-09 A | 2026-09-10 → 2026-09-19 A (+9d) | 0% → 100% |  |
| RHD4CZ5C061SW1500 | Backfilling and warning tape works for GRP Pipe Line 300 mm - (RD-C-6 /1)-Z5-C061-SW | 2026-09-14 A | 2026-09-15 → 2026-09-20 A (+5d) | 0% → 100% |  |
| RHD4CZ5C061SW1400 | Primary Test for GRP Pipe Line 300 mm - (RD-C-6 /1)-Z5-C061-SW | 2026-09-12 → 2027-03-17 (+186d) | 2026-09-13 → 2027-03-18 (+186d) |  |  |
| 4546 | **RHD4-02-002-C061-(SW)-UPVC Pipes - 200 mm diameter** | 2026-09-02 → 2026-08-09 (-24d) | 2026-09-17 → 2027-03-21 (+185d) |  |  |
| RHD4CZ5C061SW2100 | Excavation works for UPVC Pipe Line 200 mm - (RD-C-6 /1)-Z5-C061-SW | 2026-09-02 → 2026-08-09 A (-24d) | 2026-09-03 → 2026-09-10 A (+7d) | 0% → 100% | resources Skilled labor [9.58 h]; Unskilled Labor [9.58 h]; Equipment Opreator [11.54 h]; Excavator-Poclain [9.58 h]; Dump Truck [1.96 h]; UPVC (200mm Diameter) - SW - Depth: 1.51m - 2.5m [9.23 m]; UPVC (200mm Diameter) - SW - Depth: 2.51m - 3.5m [12.97 m]; UPVC (200mm Diameter) - SW - Depth: 3.51m - 4.5m → Skilled labor [9.6 h]; Unskilled Labor [9.6 h]; Equipment Opreator [11.54 h]; Excavator-Poclain [9.6 h]; Dump Truck [1.96 h]; UPVC (200mm Diameter) - SW - Depth: 1.51m - 2.5m [9.23 m]; UPVC (200mm Diameter) - SW - Depth: 2.51m - 3.5m [12.97 m]; UPVC (200mm Diameter) - SW - Depth: 3.51m - 4.5m |
| RHD4CZ5C061SW2200 | Bedding works for UPVC Pipe Line 200 mm - (RD-C-6 /1)-Z5-C061-SW | 2026-09-05 → 2026-08-10 A (-26d) | 2026-09-06 → 2026-09-13 A (+7d) | 0% → 100% | resources Skilled labor [9.58 h]; Unskilled Labor [19.28 h]; Equipment Opreator [19.28 h]; Excavator-Poclain [9.58 h]; Dump Truck [9.58 h]; UPVC (200mm Diameter) - SW - Depth: 1.51m - 2.5m [3.08 m]; UPVC (200mm Diameter) - SW - Depth: 2.51m - 3.5m [4.32 m]; UPVC (200mm Diameter) - SW - Depth: 3.51m - 4.5m → Skilled labor [9.6 h]; Unskilled Labor [19.28 h]; Equipment Opreator [19.28 h]; Excavator-Poclain [9.6 h]; Dump Truck [9.6 h]; UPVC (200mm Diameter) - SW - Depth: 1.51m - 2.5m [3.08 m]; UPVC (200mm Diameter) - SW - Depth: 2.51m - 3.5m [4.32 m]; UPVC (200mm Diameter) - SW - Depth: 3.51m - 4.5m |
| RHD4CZ5C061SW2300 | Installing for UPVC Pipe Line 200 mm - (RD-C-6 /1)-Z5-C061-SW | 2026-09-12 → 2026-08-12 A (-31d) | 2026-09-13 → 2026-09-14 A (+1d) | 0% → 100% | resources Unskilled Labor [19.28 h]; Plumber [9.58 h]; Equipment Opreator [9.58 h]; Boom Truck [9.58 h]; UPVC (200mm Diameter) - SW - Depth: 1.51m - 2.5m [24.61 m]; UPVC (200mm Diameter) - SW - Depth: 2.51m - 3.5m [34.59 m]; UPVC (200mm Diameter) - SW - Depth: 3.51m - 4.5m → Unskilled Labor [19.28 h]; Plumber [9.6 h]; Equipment Opreator [9.6 h]; Boom Truck [9.6 h]; UPVC (200mm Diameter) - SW - Depth: 1.51m - 2.5m [24.61 m]; UPVC (200mm Diameter) - SW - Depth: 2.51m - 3.5m [34.59 m]; UPVC (200mm Diameter) - SW - Depth: 3.51m - 4.5m |
| RHD4CZ5C061SW2500 | Backfilling and warning tape works for UPVC Pipe Line 200 mm - (RD-C-6 /1)-Z5-C061-SW | 2026-09-16 → 2026-08-15 A (-32d) | 2026-09-17 A | 0% → 100% | resources Skilled labor [9.58 h]; Unskilled Labor [19.28 h]; Equipment Opreator [19.28 h]; Excavator-Poclain [9.58 h]; Dump Truck [9.58 h]; UPVC (200mm Diameter) - SW - Depth: 1.51m - 2.5m [12.31 m]; UPVC (200mm Diameter) - SW - Depth: 2.51m - 3.5m [17.29 m]; UPVC (200mm Diameter) - SW - Depth: 3.51m - 4.5m → Skilled labor [9.6 h]; Unskilled Labor [19.28 h]; Equipment Opreator [19.28 h]; Excavator-Poclain [9.6 h]; Dump Truck [9.6 h]; UPVC (200mm Diameter) - SW - Depth: 1.51m - 2.5m [12.31 m]; UPVC (200mm Diameter) - SW - Depth: 2.51m - 3.5m [17.29 m]; UPVC (200mm Diameter) - SW - Depth: 3.51m - 4.5m |
| RHD4CZ5C061SW2400 | Primary Test for UPVC Pipe Line 200 mm - (RD-C-6 /1)-Z5-C061-SW | 2026-09-14 → 2027-03-20 (+187d) | 2026-09-15 → 2027-03-21 (+187d) |  |  |
| 4577 | **RHD4-02-002-Z5-C061-Potable Network - PT** | 2026-09-19 → 2027-03-22 (+184d) | 2026-10-07 → 2027-04-08 (+183d) |  |  |
| 4579 | **RHD4-02-002-C061-(PT)-HDPE Pipes - 160 mm diameter** | 2026-09-19 → 2027-03-22 (+184d) | 2026-10-05 → 2027-04-06 (+183d) |  |  |
| RHD4CZ5C061PT1101 | Excavation works for HDPE Pipline 160 mm - (RD-C-6 /1)-Z5-C061-PT | 2026-09-19 → 2027-03-22 (+184d) | 2026-09-20 → 2027-03-23 (+184d) |  |  |
| RHD4CZ5C061PT1201 | Bedding works for HDPE Pipline 160 mm - (RD-C-6 /1)-Z5-C061-PT | 2026-09-21 → 2027-03-24 (+184d) | 2026-09-22 → 2027-03-25 (+184d) |  |  |
| RHD4CZ5C061PT1301 | Installing for HDPE Pipline 160 mm - (RD-C-6 /1)-Z5-C061-PT | 2026-09-24 → 2027-03-27 (+184d) | 2026-09-27 → 2027-03-29 (+183d) |  |  |
| RHD4CZ5C061PT1401 | Primary Test for HDPE Pipline 160 mm - (RD-C-6 /1)-Z5-C061-PT | 2026-09-30 → 2027-04-01 (+183d) | 2026-10-01 → 2027-04-03 (+184d) |  |  |
| RHD4CZ5C061PT1501 | Backfilling and warning tape works for HDPE Pipline 160 mm - (RD-C-6 /1)-Z5-C061-PT | 2026-10-03 → 2027-04-04 (+183d) | 2026-10-05 → 2027-04-06 (+183d) |  | resources Skilled labor [22.43 h]; Unskilled Labor [44.87 h]; Equipment Opreator [44.87 h]; Excavator-Poclain [22.43 h]; Dump Truck [22.43 h]; HDPE (160mm Diameter) - PT - Depth: less than 1.5m [82.38 m]; HDPE (160mm Diameter) - PT - Depth: 1.51m - 2.5m → Skilled labor [22.4 h]; Unskilled Labor [44.87 h]; Equipment Opreator [44.87 h]; Excavator-Poclain [22.4 h]; Dump Truck [22.4 h]; HDPE (160mm Diameter) - PT - Depth: less than 1.5m [82.38 m]; HDPE (160mm Diameter) - PT - Depth: 1.51m - 2.5m |
| 2888 | **RHD4-02-002-C061-(PT)-Fire Hydrant** | 2026-09-24 → 2027-03-27 (+184d) | 2026-10-05 → 2027-04-06 (+183d) |  |  |
| RHD4CZ5C061PT4100 | Excavation and Bedding and Pipe Installation for Fire Hydrant - (ROUND-07)-Z5-RA07-PT | 2026-09-24 → 2027-03-27 (+184d) | 2026-09-26 → 2027-03-28 (+183d) |  |  |
| RHD4CZ5C061PT4200 | Valve Installation for Fire Hydrant - (ROUND-07)-Z5-RA07-PT | 2026-09-27 → 2027-03-29 (+183d) | 2026-09-28 → 2027-03-30 (+183d) |  |  |
| RHD4CZ5C061PT4300 | Stem for Fire Hydrant - (ROUND-07)-Z5-RA07-PT | 2026-09-29 → 2027-03-31 (+183d) | 2026-09-30 → 2027-04-01 (+183d) |  |  |
| RHD4CZ5C061PT4400 | Fire Installation for Fire Hydrant - (ROUND-07)-Z5-RA07-PT | 2026-10-01 → 2027-04-03 (+184d) | 2026-10-03 → 2027-04-04 (+183d) |  |  |
| RHD4CZ5C061PT4500 | Protection Barriers for Fire Hydrant - (ROUND-07)-Z5-RA07-PT | 2026-10-04 → 2027-04-05 (+183d) | 2026-10-05 → 2027-04-06 (+183d) |  |  |
| 4586 | **RHD4-02-002-C061-(PT)-Wash out Valve Chambers** | 2026-09-21 → 2027-03-24 (+184d) | 2026-09-30 → 2027-04-01 (+183d) |  |  |
| RHD4CZ5C061PT2101 | Excavation and Bedding for Wash out Valve Chambers for Potable Water Network - (RD-C-6 /1)-Z5-C061-PT | 2026-09-21 → 2027-03-24 (+184d) | 2026-09-22 → 2027-03-25 (+184d) |  |  |
| RHD4CZ5C061PT2201 | PC works for Wash out Valve Chambers for Potable Water Network - (RD-C-6 /1)-Z5-C061-PT | 2026-09-24 → 2027-03-27 (+184d) | 2026-09-26 → 2027-03-28 (+183d) |  |  |
| RHD4CZ5C061PT2301 | Installation for Wash out Valve Chambers for Potable Water Network - (RD-C-6 /1)-Z5-C061-PT | 2026-09-27 → 2027-03-29 (+183d) | 2026-09-28 → 2027-03-30 (+183d) |  |  |
| RHD4CZ5C061PT2401 | Backfilling works for Wash out Valve Chambers for Potable Water Network - (RD-C-6 /1)-Z5-C061-PT | 2026-09-29 → 2027-03-31 (+183d) | 2026-09-30 → 2027-04-01 (+183d) |  |  |
| 4587 | **RHD4-02-002-C061-(PT)-Wash out Valves** | 2026-09-29 → 2027-03-31 (+183d) | 2026-10-03 → 2027-04-04 (+183d) |  |  |
| RHD4CZ5C061PT3102 | Installation for Wash out Valves for Potable Water Network - (RD-C-6 /1)-Z5-C061-PT | 2026-09-29 → 2027-03-31 (+183d) | 2026-09-30 → 2027-04-01 (+183d) |  |  |
| RHD4CZ5C061PT3202 | Stem and Service box for Wash out Valves for Potable Water Network - (RD-C-6 /1)-Z5-C061-PT | 2026-10-01 → 2027-04-03 (+184d) | 2026-10-03 → 2027-04-04 (+183d) |  |  |
| 4591 | **RHD4-02-002-C061-(PT)-Concrete Encasement** | 2026-09-24 → 2027-03-27 (+184d) | 2026-09-29 → 2027-03-31 (+183d) |  |  |
| RHD4CZ5C061PT5100 | Pipe Encasement for Potable Pipelines - (RD-C-6 /1)-Z5-C061-PT | 2026-09-24 → 2027-03-27 (+184d) | 2026-09-29 → 2027-03-31 (+183d) |  | resources Skilled labor [47.81 h]; Unskilled Labor [47.81 h]; Equipment Opreator [52.49 h]; Concrete Mixer Truck [4.79 h]; Dump Truck [47.81 h]; Pipe Encasement - PT [21.93 m3] → Skilled labor [47.81 h]; Unskilled Labor [47.81 h]; Equipment Opreator [52.49 h]; Concrete Mixer Truck [4.8 h]; Dump Truck [47.81 h]; Pipe Encasement - PT [21.93 m3] |
| 4583 | **RHD4-02-002-C061-(PT)-Gate Valves (Direct Buried)** | 2026-09-26 → 2027-03-28 (+183d) | 2026-10-07 → 2027-04-08 (+183d) |  |  |
| RHD4CZ5C061PT3100 | Installation for Direct Buried Gate Valves - (RD-C-6 /1)-Z5-C061-PT | 2026-09-26 → 2027-03-28 (+183d) | 2026-09-27 → 2027-03-29 (+183d) |  |  |
| RHD4CZ5C061PT3200 | Stem and Service box for Direct Buried Gate Valves - (RD-C-6 /1)-Z5-C061-PT | 2026-10-06 → 2027-04-07 (+183d) | 2026-10-07 → 2027-04-08 (+183d) |  |  |
| 4592 | **RHD4-02-002-Z5-C061-Irrigation Network - IRR** | 2026-09-21 → 2027-03-24 (+184d) | 2026-10-03 → 2027-04-04 (+183d) |  |  |
| 4595 | **RHD4-02-002-C061-(IRR)-HDPE Pipes - 200 mm diameter** | 2026-09-21 → 2027-03-24 (+184d) | 2026-10-03 → 2027-04-04 (+183d) |  |  |
| RHD4CZ5C061IRR1102 | Excavation works for HDPE Pipline 200 mm - (RD-C-6 /1)-Z5-C061-IRR | 2026-09-21 → 2027-03-24 (+184d) | 2026-09-22 → 2027-03-25 (+184d) |  |  |
| RHD4CZ5C061IRR1202 | Bedding works for HDPE Pipline 200 mm - (RD-C-6 /1)-Z5-C061-IRR | 2026-09-24 → 2027-03-27 (+184d) | 2026-09-26 → 2027-03-28 (+183d) |  |  |
| RHD4CZ5C061IRR1302 | Installing for HDPE Pipline 200 mm - (RD-C-6 /1)-Z5-C061-IRR | 2026-09-27 → 2027-03-29 (+183d) | 2026-09-28 → 2027-03-30 (+183d) |  |  |
| RHD4CZ5C061IRR1402 | Primary Test for HDPE Pipline 200 mm - (RD-C-6 /1)-Z5-C061-IRR | 2026-09-29 → 2027-03-31 (+183d) | 2026-09-30 → 2027-04-01 (+183d) |  |  |
| RHD4CZ5C061IRR1502 | Backfilling and warning tape works for HDPE Pipline 200 mm - (RD-C-6 /1)-Z5-C061-IRR | 2026-10-01 → 2027-04-03 (+184d) | 2026-10-03 → 2027-04-04 (+183d) |  |  |
| 4626 | **RHD4-02-002-Z5-C061-Medium Voltage Network - MV** | 2026-10-04 → 2027-04-05 (+183d) | 2027-02-21 → 2027-08-21 (+181d) |  |  |
| 4627 | **RHD4-02-002-C061-(MV)-Medium Voltage cable trench** | 2027-01-27 → 2027-07-27 (+181d) | 2027-02-06 → 2027-08-05 (+180d) |  |  |
| RHD4CZ5C061MV1100 | Excavation for Medium Voltage Trench - (RD-C-6 /1)-Z5-C061-MV | 2027-01-27 → 2027-07-27 (+181d) | 2027-01-30 → 2027-07-29 (+180d) |  |  |
| RHD4CZ5C061MV1200 | Trench Backfilling for Medium Voltage Network - (RD-C-6 /1)-Z5-C061-MV | 2027-02-03 → 2027-08-03 (+181d) | 2027-02-06 → 2027-08-05 (+180d) |  |  |
| 4628 | **RHD4-02-002-C061-(MV)-Medium Voltage duct banks** | 2026-10-04 → 2027-04-05 (+183d) | 2026-10-12 → 2027-04-13 (+183d) |  |  |
| RHD4CZ5C061MV2100 | Excavation of Duct Banks for Medium Voltage Network - (RD-C-6 /1)-Z5-C061-MV | 2026-10-04 → 2027-04-05 (+183d) | 2026-10-05 → 2027-04-06 (+183d) |  |  |
| RHD4CZ5C061MV2200 | Installation of Duct Banks for Medium Voltage Network - (RD-C-6 /1)-Z5-C061-MV | 2026-10-06 → 2027-04-07 (+183d) | 2026-10-07 → 2027-04-08 (+183d) |  |  |
| RHD4CZ5C061MV2300 | Pouring of Duct Banks for Medium Voltage Network - (RD-C-6 /1)-Z5-C061-MV | 2026-10-08 → 2027-04-10 (+184d) | 2026-10-10 → 2027-04-11 (+183d) |  |  |

| ID | Task | Start | Finish | Duration | Other |
| --- | --- | --- | --- | --- | --- |
| RHD4CZ5C061MV2400 | Backfilling of Duct Banks for Medium Voltage Network - (RD-C-6 /1)-Z5-C061-MV | 2026-10-11 → 2027-04-12 (+183d) | 2026-10-12 → 2027-04-13 (+183d) |  |  |
| 4629 | **RHD4-02-002-C061-(MV)-Medium Voltage cables 3Cx 500 mm²** | 2027-01-31 → 2027-07-31 (+181d) | 2027-02-10 → 2027-08-10 (+181d) |  |  |
| RHD4CZ5C061MV3100 | Installation of Medium Voltage Cables 3Cx 500 mm² - (RD-C-6 /1)-Z5-C061-MV | 2027-01-31 → 2027-07-31 (+181d) | 2027-02-02 → 2027-08-02 (+181d) |  |  |
| RHD4CZ5C061MV3300 | Testing of Medium Voltage Cables 3Cx 500 mm² - (RD-C-6 /1)-Z5-C061-MV | 2027-02-07 → 2027-08-07 (+181d) | 2027-02-08 → 2027-08-08 (+181d) |  |  |
| RHD4CZ5C061MV3400 | Termination of Medium Voltage Cables 3Cx 500 mm² - (RD-C-6 /1)-Z5-C061-MV | 2027-02-09 → 2027-08-09 (+181d) | 2027-02-10 → 2027-08-10 (+181d) |  |  |
| 4630 | **RHD4-02-002-C061-(MV)-Medium Voltage cables 3Cx 50 mm²** | 2027-01-31 → 2027-07-31 (+181d) | 2027-02-10 → 2027-08-10 (+181d) |  |  |
| RHD4CZ5C061MV3101 | Installation of Medium Voltage Cables 3Cx 50 mm² - (RD-C-6 /1)-Z5-C061-MV | 2027-01-31 → 2027-07-31 (+181d) | 2027-02-01 → 2027-08-01 (+181d) |  |  |
| RHD4CZ5C061MV3301 | Testing of Medium Voltage Cables 3Cx 50 mm² - (RD-C-6 /1)-Z5-C061-MV | 2027-02-07 → 2027-08-07 (+181d) | 2027-02-08 → 2027-08-08 (+181d) |  |  |
| RHD4CZ5C061MV3401 | Termination of Medium Voltage Cables 3Cx 50 mm² - (RD-C-6 /1)-Z5-C061-MV | 2027-02-09 → 2027-08-09 (+181d) | 2027-02-10 → 2027-08-10 (+181d) |  |  |
| 4632 | **RHD4-02-002-C061-(MV)-Unit Substations** | 2027-02-07 → 2027-08-07 (+181d) | 2027-02-21 → 2027-08-21 (+181d) |  |  |
| RHD4CZ5C061MV5100 | Excavation for Unit Substations for Medium Voltage Network - (RD-C-6 /1)-Z5-C061-MV | 2027-02-07 → 2027-08-07 (+181d) | 2027-02-08 → 2027-08-08 (+181d) |  |  |
| RHD4CZ5C061MV5200 | Concrete Base Placement for Unit Substations for Medium Voltage Network - (RD-C-6 /1)-Z5-C061-MV | 2027-02-09 → 2027-08-09 (+181d) | 2027-02-10 → 2027-08-10 (+181d) |  |  |
| RHD4CZ5C061MV5300 | Installation for Fences and doors for Medium Voltage Network - (RD-C-6 /1)-Z5-C061-MV | 2027-02-11 → 2027-08-11 (+181d) | 2027-02-16 → 2027-08-16 (+181d) |  |  |
| RHD4CZ5C061MV5400 | Installation for Unit Substations for Medium Voltage Network - (RD-C-6 /1)-Z5-C061-MV | 2027-02-17 → 2027-08-17 (+181d) | 2027-02-21 → 2027-08-21 (+181d) |  |  |
| 4633 | **RHD4-02-002-Z5-C061-Low Voltage Network - LV** | 2026-12-09 → 2027-05-02 (+144d) | 2027-01-06 → 2027-06-03 (+148d) |  |  |
| 4634 | **RHD4-02-002-C061-(LV)-Low Voltage duct banks** | 2026-12-09 → 2027-05-02 (+144d) | 2026-12-17 → 2027-05-10 (+144d) |  |  |
| RHD4CZ5C061LV2100 | Excavation of Duct Banks for Low Voltage Network - (RD-C-6 /1)-Z5-C061-LV | 2026-12-09 → 2027-05-02 (+144d) | 2026-12-10 → 2027-05-03 (+144d) |  |  |
| RHD4CZ5C061LV2200 | Installation of Duct Banks for Low Voltage Network - (RD-C-6 /1)-Z5-C061-LV | 2026-12-12 → 2027-05-04 (+143d) | 2026-12-13 → 2027-05-05 (+143d) |  |  |
| RHD4CZ5C061LV2300 | Pouring of Duct Banks for Low Voltage Network - (RD-C-6 /1)-Z5-C061-LV | 2026-12-14 → 2027-05-06 (+143d) | 2026-12-15 → 2027-05-08 (+144d) |  |  |
| RHD4CZ5C061LV2400 | Backfilling of Duct Banks for Low Voltage Network - (RD-C-6 /1)-Z5-C061-LV | 2026-12-16 → 2027-05-09 (+144d) | 2026-12-17 → 2027-05-10 (+144d) |  |  |
| 4636 | **RHD4-02-002-C061-(LV)-Low Voltage cables** | 2026-12-19 → 2027-05-11 (+143d) | 2026-12-30 → 2027-05-27 (+148d) |  |  |
| RHD4CZ5C061LV3100 | Excavation for Low Voltage Cables for Low Voltage Network - (RD-C-6 /1)-Z5-C061-LV | 2026-12-19 → 2027-05-11 (+143d) | 2026-12-21 → 2027-05-13 (+143d) |  | resources Skilled labor [29.62 h]; Unskilled Labor [59.35 h]; Equipment Opreator [59.35 h]; Excavator-Poclain [29.62 h]; Boom Truck [29.62 h]; Cable, Copper 4x185mm2/ CU/XLPE/PVC [57.8 m]; Cable, Copper 4x50mm2/ CU/XLPE/PVC +1x25mm2 CU/PVC [20.71 m]; Cable, Copper 3x10mm2/ CU/XLPE/SWA/PVC [57.64 m] → Skilled labor [29.6 h]; Unskilled Labor [59.35 h]; Equipment Opreator [59.35 h]; Excavator-Poclain [29.6 h]; Boom Truck [29.6 h]; Cable, Copper 4x185mm2/ CU/XLPE/PVC [57.8 m]; Cable, Copper 4x50mm2/ CU/XLPE/PVC +1x25mm2 CU/PVC [20.71 m]; Cable, Copper 3x10mm2/ CU/XLPE/SWA/PVC [57.64 m] |
| RHD4CZ5C061LV3200 | Cable Laying of Low Voltage Cables for Low Voltage Network - (RD-C-6 /1)-Z5-C061-LV | 2026-12-22 → 2027-05-19 (+148d) | 2026-12-24 → 2027-05-22 (+149d) |  |  |
| RHD4CZ5C061LV3300 | Warning tape and Backfill for Low Voltage Cables for Low Voltage Network - (RD-C-6 /1)-Z5-C061-LV | 2026-12-26 → 2027-05-23 (+148d) | 2026-12-28 → 2027-05-25 (+148d) |  |  |
| RHD4CZ5C061LV3400 | Testing of Low Voltage Cables for Low Voltage Network - (RD-C-6 /1)-Z5-C061-LV | 2026-12-29 → 2027-05-26 (+148d) | 2026-12-30 → 2027-05-27 (+148d) |  | resources Skilled labor [14.81 h]; Unskilled Labor [59.35 h]; Electrician [29.62 h]; Equipment Opreator [14.81 h]; Boom Truck [14.81 h]; Cable, Copper 4x185mm2/ CU/XLPE/PVC [14.45 m]; Cable, Copper 4x50mm2/ CU/XLPE/PVC +1x25mm2 CU/PVC [5.18 m]; Cable, Copper 3x10mm2/ CU/XLPE/SWA/PVC [14.41 m] → Skilled labor [14.81 h]; Unskilled Labor [59.35 h]; Electrician [29.6 h]; Equipment Opreator [14.81 h]; Boom Truck [14.81 h]; Cable, Copper 4x185mm2/ CU/XLPE/PVC [14.45 m]; Cable, Copper 4x50mm2/ CU/XLPE/PVC +1x25mm2 CU/PVC [5.18 m]; Cable, Copper 3x10mm2/ CU/XLPE/SWA/PVC [14.41 m] |
| 4637 | **RHD4-02-002-C061-(LV)-Low Voltage Distribution Pillars** | 2026-12-31 → 2027-05-29 (+149d) | 2027-01-06 → 2027-06-03 (+148d) |  |  |
| RHD4CZ5C061LV4100 | Leveling for Distribution Pillars for Low Voltage Network - (RD-C-6 /1)-Z5-C061-LV | 2026-12-31 → 2027-05-29 (+149d) | 2027-01-02 → 2027-05-30 (+148d) |  |  |
| RHD4CZ5C061LV4200 | Lean Concrete for Distribution Pillars for Low Voltage Network - (RD-C-6 /1)-Z5-C061-LV | 2027-01-03 → 2027-05-31 (+148d) | 2027-01-04 → 2027-06-01 (+148d) |  |  |
| RHD4CZ5C061LV4300 | Installation of Distribution Pillars for Low Voltage Network - (RD-C-6 /1)-Z5-C061-LV | 2027-01-05 → 2027-06-02 (+148d) | 2027-01-06 → 2027-06-03 (+148d) |  |  |
| 4639 | **RHD4-02-002-Z5-C061-Street Lighting Network - SL** | 2026-12-12 → 2027-05-04 (+143d) | 2027-02-03 → 2027-07-01 (+148d) |  |  |
| 4640 | **RHD4-02-002-C061-(SL)-Street Lighting duct banks** | 2026-12-12 → 2027-05-04 (+143d) | 2026-12-30 → 2027-05-27 (+148d) |  |  |
| RHD4CZ5C061SL2100 | Excavation of Duct Banks for Street Lighting Network - (RD-C-6 /1)-Z5-C061-SL | 2026-12-12 → 2027-05-04 (+143d) | 2026-12-15 → 2027-05-08 (+144d) |  | resources Skilled labor [42.04 h]; Unskilled Labor [42.04 h]; Equipment Opreator [83.96 h]; Excavator-Poclain [42.04 h]; Dump Truck [42.04 h]; Road Crossing Duct for Street Lighting cables UPVC (2x?110mm) [3.38 m]; Road Crossing Duct for Street Lighting cables UPVC (4x?110mm) [1.42 m]; Road Crossing Duct for Street Lighting cables UPVC (6x?110mm) [0.98 m] → Skilled labor [42.04 h]; Unskilled Labor [42.04 h]; Equipment Opreator [84 h]; Excavator-Poclain [42.04 h]; Dump Truck [42.04 h]; Road Crossing Duct for Street Lighting cables UPVC (2x?110mm) [3.38 m]; Road Crossing Duct for Street Lighting cables UPVC (4x?110mm) [1.42 m]; Road Crossing Duct for Street Lighting cables UPVC (6x?110mm) [0.98 m] |
| RHD4CZ5C061SL2200 | Installation of Duct Banks for Street Lighting Network - (RD-C-6 /1)-Z5-C061-SL | 2026-12-16 → 2027-05-09 (+144d) | 2026-12-22 → 2027-05-19 (+148d) |  |  |
| RHD4CZ5C061SL2300 | Pouring of Duct Banks for Street Lighting Network - (RD-C-6 /1)-Z5-C061-SL | 2026-12-23 → 2027-05-20 (+148d) | 2026-12-27 → 2027-05-24 (+148d) |  | resources Skilled labor [42.04 h]; Unskilled Labor [42.04 h]; Equipment Opreator [16.77 h]; Concrete Mixer Truck [8.39 h]; Concrete Pump [8.39 h]; Road Crossing Duct for Street Lighting cables UPVC (2x?110mm) [21.98 m]; Road Crossing Duct for Street Lighting cables UPVC (4x?110mm) [9.26 m]; Road Crossing Duct for Street Lighting cables UPVC (6x?110mm) [6.36 m] → Skilled labor [42.04 h]; Unskilled Labor [42.04 h]; Equipment Opreator [16.8 h]; Concrete Mixer Truck [8.39 h]; Concrete Pump [8.39 h]; Road Crossing Duct for Street Lighting cables UPVC (2x?110mm) [21.98 m]; Road Crossing Duct for Street Lighting cables UPVC (4x?110mm) [9.26 m]; Road Crossing Duct for Street Lighting cables UPVC (6x?110mm) [6.36 m] |
| RHD4CZ5C061SL2400 | Backfilling of Duct Banks for Street Lighting Network - (RD-C-6 /1)-Z5-C061-SL | 2026-12-28 → 2027-05-25 (+148d) | 2026-12-30 → 2027-05-27 (+148d) |  |  |
| 4641 | **RHD4-02-002-C061-(SL)-Street Lighting Drawpit** | 2027-01-07 → 2027-06-05 (+149d) | 2027-01-11 → 2027-06-08 (+148d) |  |  |
| RHD4CZ5C061SL5100 | Excavation of Drawpit size 600x600x900mm for Street Lighting Network - (RD-C-6 /1)-Z5-C061-SL | 2027-01-07 → 2027-06-05 (+149d) | 2027-01-09 → 2027-06-06 (+148d) |  |  |
| RHD4CZ5C061SL5200 | Installation of Drawpit size 600x600x900mm for Street Lighting Network - (RD-C-6 /1)-Z5-C061-SL | 2027-01-10 → 2027-06-07 (+148d) | 2027-01-11 → 2027-06-08 (+148d) |  |  |
| 4642 | **RHD4-02-002-C061-(SL)-Street Lighting cables** | 2027-01-12 → 2027-06-09 (+148d) | 2027-01-20 → 2027-06-17 (+148d) |  |  |
| RHD4CZ5C061SL3100 | Excavation for Street Lighting Cables for Street Lighting Network - (RD-C-6 /1)-Z5-C061-SL | 2027-01-12 → 2027-06-09 (+148d) | 2027-01-13 → 2027-06-10 (+148d) |  |  |
| RHD4CZ5C061SL3200 | Cable Laying of Street Lighting Cables for Street Lighting Network - (RD-C-6 /1)-Z5-C061-SL | 2027-01-14 → 2027-06-12 (+149d) | 2027-01-16 → 2027-06-13 (+148d) |  |  |
| RHD4CZ5C061SL3300 | Warning tape and Backfill for Street Lighting Cables for Street Lighting Network - (RD-C-6 /1)-Z5-C061-SL | 2027-01-17 → 2027-06-14 (+148d) | 2027-01-18 → 2027-06-15 (+148d) |  |  |
| RHD4CZ5C061SL3400 | Testing of Street Lighting Cables for Street Lighting Network - (RD-C-6 /1)-Z5-C061-SL | 2027-01-19 → 2027-06-16 (+148d) | 2027-01-20 → 2027-06-17 (+148d) |  |  |
| 4643 | **RHD4-02-002-C061-(SL)-Street Lighting Poles** | 2027-01-21 → 2027-06-19 (+149d) | 2027-02-01 → 2027-06-29 (+148d) |  |  |
| RHD4CZ5C061SL1100 | Excavation for RC Base for Lighting Poles for Street Lighting Network - (RD-C-6 /1)-Z5-C061-SL | 2027-01-21 → 2027-06-19 (+149d) | 2027-01-23 → 2027-06-20 (+148d) |  |  |
| RHD4CZ5C061SL1200 | Installation for RC Base for Lighting Poles for Street Lighting Network - (RD-C-6 /1)-Z5-C061-SL | 2027-01-24 → 2027-06-21 (+148d) | 2027-01-25 → 2027-06-22 (+148d) |  |  |
| RHD4CZ5C061SL1300 | Backfill for RC Base for Lighting Poles for Street Lighting Network - (RD-C-6 /1)-Z5-C061-SL | 2027-01-26 → 2027-06-23 (+148d) | 2027-01-27 → 2027-06-24 (+148d) |  |  |
| RHD4CZ5C061SL1400 | Installation for Lighting Poles for Street Lighting Network - (RD-C-6 /1)-Z5-C061-SL | 2027-01-28 → 2027-06-26 (+149d) | 2027-01-30 → 2027-06-27 (+148d) |  |  |
| RHD4CZ5C061SL1500 | Luminaire Installation for Lighting Poles for Street Lighting Network - (RD-C-6 /1)-Z5-C061-SL | 2027-01-31 → 2027-06-28 (+148d) | 2027-02-01 → 2027-06-29 (+148d) |  |  |
| 4644 | **RHD4-02-002-C061-(SL)-Street Lighting Feeder Pillars** | 2027-01-19 → 2027-06-16 (+148d) | 2027-02-01 → 2027-06-29 (+148d) |  |  |
| RHD4CZ5C061SL4100 | Leveling for Distribution Pillars for Street Lighting Network - (RD-C-6 /1)-Z5-C061-SL | 2027-01-19 → 2027-06-16 (+148d) | 2027-01-20 → 2027-06-17 (+148d) |  |  |
| RHD4CZ5C061SL4200 | Lean Concrete for Distribution Pillars for Street Lighting Network - (RD-C-6 /1)-Z5-C061-SL | 2027-01-21 → 2027-06-19 (+149d) | 2027-01-23 → 2027-06-20 (+148d) |  |  |
| RHD4CZ5C061SL4300 | Installation of Distribution Pillars for Street Lighting Network - (RD-C-6 /1)-Z5-C061-SL | 2027-01-31 → 2027-06-28 (+148d) | 2027-02-01 → 2027-06-29 (+148d) |  |  |
| 4645 | **RHD4-02-002-C061-(SL)-Street Lighting Earthing System** | 2027-02-02 → 2027-06-30 (+148d) | 2027-02-03 → 2027-07-01 (+148d) |  |  |
| RHD4CZ5C061SL6100 | Installation of Earthing for Lighting Poles and Fedder Pillers for Street Lighting Network - (RD-C-6 /1)-Z5-C061-SL | 2027-02-02 → 2027-06-30 (+148d) | 2027-02-03 → 2027-07-01 (+148d) |  |  |
| 4651 | **RHD4-02-002-Z5-C061-Telecommunications Network - TC** | 2026-08-01 → 2027-02-02 (+185d) | 2027-02-13 → 2027-07-18 (+155d) |  |  |
| 4652 | **RHD4-02-002-C061-(TC)-Telecommunications Ducts** | 2027-02-04 → 2027-07-03 (+149d) | 2027-02-13 → 2027-07-18 (+155d) |  |  |
| RHD4CZ5C061TC2100 | Excavation of HDPE Ducts for Telecom Network - (RD-C-6 /1)-Z5-C061-TC | 2027-02-04 → 2027-07-03 (+149d) | 2027-02-06 → 2027-07-06 (+150d) | 2d → 4d | resources Skilled labor [39.21 h]; Unskilled Labor [39.21 h]; Equipment Opreator [78.52 h]; Excavator-Poclain [39.21 h]; Dump Truck [39.21 h]; (6*50mm) HDPE ducts -TC [99.6 m]; (6*50mm+2*32mm) HDPE ducts -TC [6.3 m]; (2*32mm) HDPE ducts -TC [2.22 m] → Skilled labor [39.2 h]; Unskilled Labor [39.2 h]; Equipment Opreator [78.52 h]; Excavator-Poclain [39.2 h]; Dump Truck [39.2 h]; (6*50mm) HDPE ducts -TC [99.6 m]; (6*50mm+2*32mm) HDPE ducts -TC [6.3 m]; (2*32mm) HDPE ducts -TC [2.22 m] |
| RHD4CZ5C061TC2200 | Installation of HDPE Ducts for Telecom Network - (RD-C-6 /1)-Z5-C061-TC | 2027-02-07 → 2027-07-07 (+150d) | 2027-02-09 → 2027-07-13 (+154d) | 3d → 6d |  |
| RHD4CZ5C061TC2400 | Backfilling of HDPE Ducts for Telecom Network - (RD-C-6 /1)-Z5-C061-TC | 2027-02-11 → 2027-07-14 (+153d) | 2027-02-13 → 2027-07-18 (+155d) | 2d → 4d | resources Skilled labor [39.21 h]; Unskilled Labor [39.21 h]; Equipment Opreator [15.68 h]; Excavator-Poclain [15.68 h]; (6*50mm) HDPE ducts -TC [74.7 m]; (6*50mm+2*32mm) HDPE ducts -TC [4.72 m]; (2*32mm) HDPE ducts -TC [1.67 m] → Skilled labor [39.2 h]; Unskilled Labor [39.2 h]; Equipment Opreator [15.68 h]; Excavator-Poclain [15.68 h]; (6*50mm) HDPE ducts -TC [74.7 m]; (6*50mm+2*32mm) HDPE ducts -TC [4.72 m]; (2*32mm) HDPE ducts -TC [1.67 m] |
| 4653 | **RHD4-02-002-C061-(TC)-Telecommunications Manholes** | 2027-02-07 → 2027-07-07 (+150d) | 2027-02-10 → 2027-07-11 (+151d) |  |  |
| RHD4CZ5C061TC5100 | Excavation for Manholes for Telecom Network - (RD-C-6 /1)-Z5-C061-TC | 2027-02-07 → 2027-07-07 (+150d) | 2027-02-08 → 2027-07-08 (+150d) |  |  |
| RHD4CZ5C061TC5200 | Installation of Manholes for Telecom Network - (RD-C-6 /1)-Z5-C061-TC | 2027-02-09 → 2027-07-10 (+151d) | 2027-02-10 → 2027-07-11 (+151d) |  |  |
| 4654 | **RHD4-02-002-C061-(TC)-Telecomminications Road Crossings** | 2026-08-01 → 2027-02-02 (+185d) | 2026-08-09 → 2027-02-10 (+185d) |  |  |
| RHD4CZ5C061TC3100 | Excavation for Road Crossings for Telecom Network - (RD-C-6 /1)-Z5-C061-TC | 2026-08-01 → 2027-02-02 (+185d) | 2026-08-02 → 2027-02-03 (+185d) |  |  |
| RHD4CZ5C061TC3200 | Installation of Road Crossings for Telecom Network - (RD-C-6 /1)-Z5-C061-TC | 2026-08-03 → 2027-02-04 (+185d) | 2026-08-04 → 2027-02-06 (+186d) |  |  |
| RHD4CZ5C061TC3300 | Pouring of Road Crossings for Telecom Network - (RD-C-6 /1)-Z5-C061-TC | 2026-08-05 → 2027-02-07 (+186d) | 2026-08-06 → 2027-02-08 (+186d) |  |  |
| RHD4CZ5C061TC3400 | Backfilling of Road Crossings for Telecom Network - (RD-C-6 /1)-Z5-C061-TC | 2026-08-08 → 2027-02-09 (+185d) | 2026-08-09 → 2027-02-10 (+185d) |  |  |
| 4655 | **RHD4-02-002-Z5-C061-Information and Communication Technologies - ICT** | 2026-08-01 → 2027-02-02 (+185d) | 2027-02-27 → 2027-08-25 (+179d) |  |  |
| 4656 | **RHD4-02-002-C061-(ICT)-Information and Communication Technologies Ducts** | 2027-02-10 → 2027-07-14 (+154d) | 2027-02-27 → 2027-08-25 (+179d) |  |  |

| ID | Task | Start | Finish | Duration | Complete | Other |
| --- | --- | --- | --- | --- | --- | --- |
| RHD4CZ5C061ICT2100 | Excavation of HDPE Ducts for ICT Network - (RD-C-6 /1)-Z5-C061-ICT | 2027-02-10 → 2027-07-14 (+154d) | 2027-02-14 → 2027-07-18 (+154d) |  |  |  |
| RHD4CZ5C061ICT2200 | Installation of HDPE Ducts for ICT Network - (RD-C-6 /1)-Z5-C061-ICT | 2027-02-15 → 2027-07-19 (+154d) | 2027-02-21 → 2027-07-25 (+154d) |  |  |  |
| RHD4CZ5C061ICT2400 | Backfilling of HDPE Ducts for ICT Network - (RD-C-6 /1)-Z5-C061-ICT | 2027-02-23 → 2027-08-22 (+180d) | 2027-02-27 → 2027-08-25 (+179d) |  |  |  |
| 4657 | **RHD4-02-002-C061-(ICT)-Information and Communication Technologies Manholes** | 2027-02-15 → 2027-07-19 (+154d) | 2027-02-21 → 2027-07-25 (+154d) |  |  |  |
| RHD4CZ5C061ICT5100 | Excavation for Manholes for ICT Network - (RD-C-6 /1)-Z5-C061-ICT | 2027-02-15 → 2027-07-19 (+154d) | 2027-02-17 → 2027-07-21 (+154d) |  |  |  |
| RHD4CZ5C061ICT5200 | Installation of Manholes for ICT Network - (RD-C-6 /1)-Z5-C061-ICT | 2027-02-18 → 2027-07-22 (+154d) | 2027-02-21 → 2027-07-25 (+154d) |  |  |  |
| 4658 | **RHD4-02-002-C061-(ICT)-Information and Communication Technologies Road Crossings** | 2026-08-01 → 2027-02-02 (+185d) | 2026-08-23 → 2027-02-27 (+188d) |  |  |  |
| RHD4CZ5C061ICT3100 | Excavation for Road Crossings for ICT Network - (RD-C-6 /1)-Z5-C061-ICT | 2026-08-01 → 2027-02-02 (+185d) | 2026-08-02 → 2027-02-03 (+185d) |  |  | resources Skilled labor [9.58 h]; Unskilled Labor [9.58 h]; Equipment Opreator [19.06 h]; Excavator-Poclain [9.58 h]; Dump Truck [9.58 h]; Road crossing ducts, (2*50mm) HDPE -ICT [1.75 m] → Skilled labor [9.6 h]; Unskilled Labor [9.6 h]; Equipment Opreator [19.06 h]; Excavator-Poclain [9.6 h]; Dump Truck [9.6 h]; Road crossing ducts, (2*50mm) HDPE -ICT [1.75 m] |
| RHD4CZ5C061ICT3200 | Installation of Road Crossings for ICT Network - (RD-C-6 /1)-Z5-C061-ICT | 2026-08-17 → 2027-02-20 (+187d) | 2026-08-18 → 2027-02-21 (+187d) |  |  |  |
| RHD4CZ5C061ICT3300 | Pouring of Road Crossings for ICT Network - (RD-C-6 /1)-Z5-C061-ICT | 2026-08-19 → 2027-02-23 (+188d) | 2026-08-20 → 2027-02-24 (+188d) |  |  |  |
| RHD4CZ5C061ICT3400 | Backfilling of Road Crossings for ICT Network - (RD-C-6 /1)-Z5-C061-ICT | 2026-08-22 → 2027-02-25 (+187d) | 2026-08-23 → 2027-02-27 (+188d) |  |  | resources Skilled labor [9.58 h]; Unskilled Labor [9.58 h]; Equipment Opreator [3.81 h]; Excavator-Poclain [3.81 h]; Road crossing ducts, (2*50mm) HDPE -ICT [2.62 m] → Skilled labor [9.6 h]; Unskilled Labor [9.6 h]; Equipment Opreator [3.81 h]; Excavator-Poclain [3.81 h]; Road crossing ducts, (2*50mm) HDPE -ICT [2.62 m] |
| 4659 | **RHD4-02-002-Z5-C061-Security Network - CCTV** | 2027-02-28 → 2027-08-26 (+179d) | 2027-04-03 → 2027-10-03 (+183d) |  |  |  |
| 4660 | **RHD4-02-002-C061-(CCTV)-Civil Works** | 2027-02-28 → 2027-08-26 (+179d) | 2027-03-14 → 2027-09-06 (+176d) |  |  |  |
| RHD4CZ5C061CCTV2100 | Civil Works for Security Network - (RD-C-6 /1)-Z5-C061-CCTV | 2027-02-28 → 2027-08-26 (+179d) | 2027-03-14 → 2027-09-06 (+176d) |  |  |  |
| 4661 | **RHD4-02-002-C061-(CCTV)-CCTV Poles** | 2027-03-15 → 2027-09-07 (+176d) | 2027-03-25 → 2027-09-18 (+177d) |  |  |  |
| RHD4CZ5C061CCTV1100 | Excavation for RC Base for CCTV Poles for Security Network - (RD-C-6 /1)-Z5-C061-CCTV | 2027-03-15 → 2027-09-07 (+176d) | 2027-03-16 → 2027-09-08 (+176d) |  |  |  |
| RHD4CZ5C061CCTV1200 | Installation for RC Base for CCTV Poles for Security Network - (RD-C-6 /1)-Z5-C061-CCTV | 2027-03-17 → 2027-09-09 (+176d) | 2027-03-18 → 2027-09-11 (+177d) |  |  |  |
| RHD4CZ5C061CCTV1300 | Backfill for RC Base for CCTV Poles for Security Network - (RD-C-6 /1)-Z5-C061-CCTV | 2027-03-20 → 2027-09-12 (+176d) | 2027-03-21 → 2027-09-13 (+176d) |  |  |  |
| RHD4CZ5C061CCTV1400 | Installation for CCTV Poles for Security Network - (RD-C-6 /1)-Z5-C061-CCTV | 2027-03-22 → 2027-09-14 (+176d) | 2027-03-23 → 2027-09-15 (+176d) |  |  |  |
| RHD4CZ5C061CCTV1500 | Protection post Installation for CCTV Poles for Security Network - (RD-C-6 /1)-Z5-C061-CCTV | 2027-03-24 → 2027-09-16 (+176d) | 2027-03-25 → 2027-09-18 (+177d) |  |  |  |
| 4662 | **RHD4-02-002-C061-(CCTV)-Camera** | 2027-03-27 → 2027-09-19 (+176d) | 2027-03-28 → 2027-09-20 (+176d) |  |  |  |
| RHD4CZ5C061CCTV3100 | Installation for Cameras for Security Network - (RD-C-6 /1)-Z5-C061-CCTV | 2027-03-27 → 2027-09-19 (+176d) | 2027-03-28 → 2027-09-20 (+176d) |  |  |  |
| 4663 | **RHD4-02-002-C061-(CCTV)-Power and Infrastructure** | 2027-03-24 → 2027-09-16 (+176d) | 2027-03-28 → 2027-09-20 (+176d) |  |  |  |
| RHD4CZ5C061CCTV4100 | Installation of Power outlet, UPS and midspan for PTZ Camerafor Cameras for Security Network - (RD-C-6 /1)-Z5-C061-CCTV | 2027-03-24 → 2027-09-16 (+176d) | 2027-03-25 → 2027-09-18 (+177d) |  |  |  |
| RHD4CZ5C061CCTV4200 | Short Range Wireless PoP wireless Bridgefor CCTV Poles for Security Network - (RD-C-6 /1)-Z5-C061-CCTV | 2027-03-27 → 2027-09-19 (+176d) | 2027-03-28 → 2027-09-20 (+176d) |  |  |  |
| 4665 | **RHD4-02-002-C061-(CCTV)-CCTV Panels and Components** | 2027-03-29 → 2027-09-21 (+176d) | 2027-04-03 → 2027-10-03 (+183d) |  |  |  |
| RHD4CZ5C061CCTV6100 | Installation for CCTV Panels for Security Network - (RD-C-6 /1)-Z5-C061-CCTV | 2027-03-29 → 2027-09-21 (+176d) | 2027-04-03 → 2027-10-03 (+183d) | 5d → 10d |  |  |
| 4298 | **RHD4-02-002-Z5-L08** | 2026-07-28 → 2026-05-20 (-69d) | 2027-07-10 → 2028-01-26 (+200d) |  |  |  |
| 4477 | **RHD4-02-002-Z5-L08-Road Works - RD** | 2026-08-15 → 2026-05-20 (-87d) | 2027-07-10 → 2028-01-26 (+200d) |  |  |  |
| 4478 | **RHD4-02-002-L08-(RD)-Subgrade** | 2026-08-15 → 2026-05-20 (-87d) | 2026-08-18 → 2026-08-03 (-15d) |  |  |  |
| RHD4CZ5L08RD1100 | Supply, lay and compaction subgrade compacted thickness 300 mm for Roads - (RD-L-8)-Z5-L08-RD(Completed) | 2026-08-15 → 2026-05-20 A (-87d) | 2026-08-18 → 2026-08-03 A (-15d) |  | 0% → 100% | resources Skilled labor [66.1 h]; Unskilled Labor [132.1 h]; Electrician [66.1 h]; Equipment Opreator [451.19 h]; Water Truck [21.78 h]; Roller compactor [33 h]; Grader [66.1 h]; Dump Truck [330.3 h]; Subgrade [4425.22 m3] → Skilled labor [66.1 h]; Unskilled Labor [132.1 h]; Electrician [66.1 h]; Equipment Opreator [451.2 h]; Water Truck [21.78 h]; Roller compactor [33 h]; Grader [66.1 h]; Dump Truck [330.3 h]; Subgrade [4425.22 m3] |
| 4479 | **RHD4-02-002-L08-(RD)-Aggregate Base Course** | 2026-08-19 → 2027-02-13 (+178d) | 2026-08-26 → 2027-02-20 (+178d) |  |  |  |
| RHD4CZ5L08RD2100 | Supply, lay and compaction Aggregate base course compacted thickness 300 mmfor Roads - (RD-L-8)-Z5-L08-RD | 2026-08-19 → 2027-02-13 (+178d) | 2026-08-26 → 2027-02-20 (+178d) |  |  |  |
| 4480 | **RHD4-02-002-L08-(RD)-Bituminous base course Two Layers, including (MC1)&(RC2)** | 2026-08-27 → 2027-02-21 (+178d) | 2027-06-06 → 2027-11-17 (+164d) |  |  |  |
| RHD4CZ5L08RD3100 | Supply, lay and Asphaltic base course including Prime Coat (MC1) for 1st Layer - (RD-L-8)-Z5-L08-RD | 2026-08-27 → 2027-02-21 (+178d) | 2026-08-29 → 2027-02-23 (+178d) |  |  | resources Skilled labor [10.78 h]; Unskilled Labor [64.8 h]; Equipment Opreator [161.94 h]; Bobcat [10.78 h]; Roller compactor [10.78 h]; Asphalt Paver [10.78 h]; Rubber Compactor [21.56 h]; MC1/RC2 Sprinkler [10.78 h]; Dump Truck [97.14 h]; Bituminous base course (Grading I - Class A), including Prime coat (MC1) & tack coate (RC2) [395.06 m3] → Skilled labor [10.78 h]; Unskilled Labor [64.8 h]; Equipment Opreator [161.94 h]; Bobcat [10.78 h]; Roller compactor [10.78 h]; Asphalt Paver [10.78 h]; Rubber Compactor [21.6 h]; MC1/RC2 Sprinkler [10.78 h]; Dump Truck [97.14 h]; Bituminous base course (Grading I - Class A), including Prime coat (MC1) & tack coate (RC2) [395.06 m3] |
| RHD4CZ5L08RD3200 | Supply, lay and Asphaltic base course including Tack Coat (RC2) for 2nd Layer - (RD-L-8)-Z5-L08-RD | 2027-06-05 → 2027-11-16 (+164d) | 2027-06-06 → 2027-11-17 (+164d) |  |  | resources Skilled labor [10.78 h]; Unskilled Labor [64.8 h]; Equipment Opreator [161.94 h]; Bobcat [10.78 h]; Roller compactor [10.78 h]; Asphalt Paver [10.78 h]; Rubber Compactor [21.56 h]; MC1/RC2 Sprinkler [10.78 h]; Dump Truck [97.14 h]; Bituminous base course (Grading I - Class A), including Prime coat (MC1) & tack coate (RC2) [395.06 m3] → Skilled labor [10.78 h]; Unskilled Labor [64.8 h]; Equipment Opreator [161.94 h]; Bobcat [10.78 h]; Roller compactor [10.78 h]; Asphalt Paver [10.78 h]; Rubber Compactor [21.6 h]; MC1/RC2 Sprinkler [10.78 h]; Dump Truck [97.14 h]; Bituminous base course (Grading I - Class A), including Prime coat (MC1) & tack coate (RC2) [395.06 m3] |
| 4482 | **RHD4-02-002-L08-(RD)-Precast Concrete Curb** | 2027-06-07 → 2027-11-18 (+164d) | 2027-06-14 → 2027-11-25 (+164d) |  |  |  |
| RHD4CZ5L08RD5100 | Supply and installation Precast Concrete Kerb for Roads - (RD-L-8)-Z5-L08-RD | 2027-06-07 → 2027-11-18 (+164d) | 2027-06-14 → 2027-11-25 (+164d) |  |  |  |
| 4485 | **RHD4-02-002-L08-(RD)-Traffic Signage** | 2027-06-15 → 2027-11-27 (+165d) | 2027-06-20 → 2027-12-04 (+167d) |  |  |  |
| RHD4CZ5L08RD8100 | Installation of Traffic Signage for Road Network - (RD-L-8)-Z5-L08-RD | 2027-06-15 → 2027-11-27 (+165d) | 2027-06-20 → 2027-12-04 (+167d) | 5d → 7d |  |  |
| 4483 | **RHD4-02-002-L08-(RD)-Precast Interlocking Block Pavers** | 2027-06-21 → 2027-12-05 (+167d) | 2027-06-27 → 2027-12-14 (+170d) |  |  |  |
| RHD4CZ5L08RD6100 | Interlocking block pavers for sidewalk-footpath for Side walks and Parking areas - (RD-L-8)-Z5-L08-RD | 2027-06-21 → 2027-12-05 (+167d) | 2027-06-27 → 2027-12-14 (+170d) | 6d → 9d |  |  |
| 4481 | **RHD4-02-002-L08-(RD)-Bituminous concrete wearing course including tack coat (RC2)** | 2027-06-28 → 2027-12-15 (+170d) | 2027-06-29 → 2027-12-16 (+170d) |  |  |  |
| RHD4CZ5L08RD4100 | Supply, lay and compaction Asphaltic wearing course including tack Coat (RC2)for Road Network - (RD-L-8)-Z5-L08-RD | 2027-06-28 → 2027-12-15 (+170d) | 2027-06-29 → 2027-12-16 (+170d) |  |  |  |
| 4484 | **RHD4-02-002-L08-(RD)-Pavement Marking** | 2027-07-07 → 2028-01-24 (+201d) | 2027-07-10 → 2028-01-26 (+200d) |  |  |  |
| RHD4CZ5L08RD7100 | Pavement Markings for Road Network - (RD-L-8)-Z5-L08-RD | 2027-07-07 → 2028-01-24 (+201d) | 2027-07-10 → 2028-01-26 (+200d) |  |  | resources Skilled labor [26.79 h]; Unskilled Labor [53.58 h]; Equipment Opreator [26.79 h]; Road Marking Machine [26.79 h]; Retroreflective Thermoplastic White Traffic Markings [238.54 m2]; Retroreflective Thermoplastic Yellow, Traffic Markings [178.35 m2]; Retroreflective raised pavement markers (cat eyes) [226 nr] → Skilled labor [26.79 h]; Unskilled Labor [53.6 h]; Equipment Opreator [26.79 h]; Road Marking Machine [26.79 h]; Retroreflective Thermoplastic White Traffic Markings [238.54 m2]; Retroreflective Thermoplastic Yellow, Traffic Markings [178.35 m2]; Retroreflective raised pavement markers (cat eyes) [226 nr] |
| 4302 | **RHD4-02-002-Z5-L08-Storm Network - ST** | 2026-07-28 → 2026-08-01 (+4d) | 2026-08-30 → 2027-02-21 (+175d) |  |  |  |
| 4321 | **RHD4-02-002-L08-(ST)-MH Works - 2000 mm diameter** | 2026-07-28 → 2026-08-04 (+7d) | 2026-08-16 → 2027-02-14 (+182d) |  |  |  |
| RHD4CZ5L08ST3102 | Excavation and PC Blinding works for MH 2000 mm - (RD-L-8)-Z5-L08-ST | 2026-07-28 → 2026-08-04 A (+7d) | 2026-07-30 → 2026-08-10 A (+11d) |  | 0% → 100% |  |
| RHD4CZ5L08ST3202 | Installation of Base for MH 2000 mm - (RD-L-8)-Z5-L08-ST | 2026-08-01 → 2026-10-27 A (+87d) | 2026-08-04 → 2027-02-02 (+182d) |  | 0% → 71% |  |
| RHD4CZ5L08ST3302 | MH Ring and C.Slab works and Backfilling works for MH 2000 mm - (RD-L-8)-Z5-L08-ST | 2026-08-05 → 2027-02-03 (+182d) | 2026-08-09 → 2027-02-07 (+182d) |  |  |  |
| RHD4CZ5L08ST3402 | Steel Cover for MH 2000 mm - (RD-L-8)-Z5-L08-ST | 2026-08-10 → 2027-02-08 (+182d) | 2026-08-12 → 2027-02-10 (+182d) |  |  |  |
| RHD4CZ5L08ST3502 | Finishing, Benching, Testing works for MH 2000 mm - (RD-L-8)-Z5-L08-ST | 2026-08-13 → 2027-02-11 (+182d) | 2026-08-16 → 2027-02-14 (+182d) |  |  |  |
| 4319 | **RHD4-02-002-L08-(ST)-MH Works - 1200 mm diameter** |  | 2026-08-17 → 2027-02-15 (+182d) |  |  |  |
| RHD4CZ5L08ST3100 | Excavation and PC Blinding works for MH 1200 mm - (RD-L-8)-Z5-L08-ST | 2026-08-01 A | 2026-08-02 → 2026-08-06 A (+4d) |  | 0% → 100% | resources Skilled labor [7.3 h]; Unskilled Labor [7.3 h]; Equipment Opreator [11.65 h]; Excavator-Poclain [7.3 h]; Water Truck [0.76 h]; Dump Truck [3.59 h]; MH (1200mm Diameter) - ST - depth 1.50 - 2.5m [0.5 nr] → Skilled labor [7.3 h]; Unskilled Labor [7.3 h]; Equipment Opreator [11.65 h]; Excavator-Poclain [7.3 h]; Water Truck [0.8 h]; Dump Truck [3.59 h]; MH (1200mm Diameter) - ST - depth 1.50 - 2.5m [0.5 nr] |
| RHD4CZ5L08ST3200 | Installation of Base for MH 1200 mm - (RD-L-8)-Z5-L08-ST | 2026-08-03 → 2026-10-27 A (+85d) | 2026-08-04 → 2026-10-28 A (+85d) |  | 0% → 100% |  |
| RHD4CZ5L08ST3300 | MH Ring and C.Slab works and Backfilling works for MH 1200 mm - (RD-L-8)-Z5-L08-ST | 2026-08-05 → 2027-01-30 (+178d) | 2026-08-06 → 2027-01-31 (+178d) |  |  |  |
| RHD4CZ5L08ST3400 | Steel Cover for MH 1200 mm - (RD-L-8)-Z5-L08-ST | 2026-08-13 → 2027-02-11 (+182d) | 2026-08-15 → 2027-02-13 (+182d) |  |  |  |
| RHD4CZ5L08ST3500 | Finishing, Benching, Testing works for MH 1200 mm - (RD-L-8)-Z5-L08-ST | 2026-08-16 → 2027-02-14 (+182d) | 2026-08-17 → 2027-02-15 (+182d) |  |  |  |
| 6393 | **RHD4-02-002-L08-(ST)-GRP Pipes - 1300 mm diameter** | 2026-08-03 → 2026-08-04 (+1d) | 2026-08-13 → 2027-02-09 (+180d) |  |  |  |
| RHD4CZ5L08ST1109 | Excavation works for GRP Pipe Line 1300 mm - (RD-L-8)-Z5-L08-ST | 2026-08-03 → 2026-08-04 A (+1d) | 2026-08-04 → 2027-01-31 (+180d) |  | 0% → 86% | resources Skilled labor [20.26 h]; Unskilled Labor [20.26 h]; Equipment Opreator [24.29 h]; Excavator-Poclain [20.26 h]; Dump Truck [4.03 h]; GRP (1300mm Diameter) - ST - Depth less than 2.5 m [35.71 m]; GRP (1300mm Diameter) - ST - Depth: 2.51m - 3.5m [17.88 m]; GRP (1300mm Diameter) - ST - Depth: 3.51m - 4.5m [5.58 m] → Skilled labor [20.26 h]; Unskilled Labor [20.26 h]; Equipment Opreator [24.29 h]; Excavator-Poclain [20.26 h]; Dump Truck [4 h]; GRP (1300mm Diameter) - ST - Depth less than 2.5 m [35.71 m]; GRP (1300mm Diameter) - ST - Depth: 2.51m - 3.5m [17.88 m]; GRP (1300mm Diameter) - ST - Depth: 3.51m - 4.5m [5.58 m] |
| RHD4CZ5L08ST1209 | Bedding works for GRP Pipe Line 1300 mm - (RD-L-8)-Z5-L08-ST | 2026-08-05 → 2026-08-06 A (+1d) | 2026-08-06 → 2027-02-02 (+180d) |  | 0% → 86% |  |
| RHD4CZ5L08ST1309 | Installing for GRP Pipe Line 1300 mm - (RD-L-8)-Z5-L08-ST | 2026-08-08 A | 2026-08-09 → 2027-02-04 (+179d) |  | 0% → 86% |  |
| RHD4CZ5L08ST1509 | Backfilling and warning tape works for GRP Pipe Line 1300 mm - (RD-L-8)-Z5-L08-ST | 2026-08-12 → 2026-08-10 A (-2d) | 2026-08-13 → 2027-02-09 (+180d) |  | 0% → 34% | resources Skilled labor [21.56 h]; Unskilled Labor [43.23 h]; Equipment Opreator [43.23 h]; Excavator-Poclain [21.56 h]; Dump Truck [21.56 h]; GRP (1300mm Diameter) - ST - Depth less than 2.5 m [47.61 m]; GRP (1300mm Diameter) - ST - Depth: 2.51m - 3.5m [23.84 m]; GRP (1300mm Diameter) - ST - Depth: 3.51m - 4.5m [7.44 m] → Skilled labor [21.6 h]; Unskilled Labor [43.2 h]; Equipment Opreator [43.2 h]; Excavator-Poclain [21.6 h]; Dump Truck [21.6 h]; GRP (1300mm Diameter) - ST - Depth less than 2.5 m [47.61 m]; GRP (1300mm Diameter) - ST - Depth: 2.51m - 3.5m [23.84 m]; GRP (1300mm Diameter) - ST - Depth: 3.51m - 4.5m [7.44 m] |
| RHD4CZ5L08ST1409 | Primary Test for GRP Pipe Line 1300 mm - (RD-L-8)-Z5-L08-ST | 2026-08-10 → 2027-02-06 (+180d) | 2026-08-11 → 2027-02-07 (+180d) |  |  |  |
| 2414 | **RHD4-02-002-L08-(ST)-GRP Pipes - 600 mm diameter** | 2026-08-03 → 2027-01-30 (+180d) | 2026-08-13 → 2027-02-09 (+180d) |  |  |  |
| RHD4CZ5L08ST1102 | Excavation works for GRP Pipe Line 600 mm - (RD-L-8)-Z5-L08-ST | 2026-08-03 → 2027-01-30 (+180d) | 2026-08-04 → 2027-01-31 (+180d) |  |  |  |
| RHD4CZ5L08ST1202 | Bedding works for GRP Pipe Line 600 mm - (RD-L-8)-Z5-L08-ST | 2026-08-05 → 2027-02-01 (+180d) | 2026-08-06 → 2027-02-02 (+180d) |  |  |  |
| RHD4CZ5L08ST1302 | Installing for GRP Pipe Line 600 mm - (RD-L-8)-Z5-L08-ST | 2026-08-08 → 2027-02-03 (+179d) | 2026-08-09 → 2027-02-04 (+179d) |  |  |  |
| RHD4CZ5L08ST1402 | Primary Test for GRP Pipe Line 600 mm - (RD-L-8)-Z5-L08-ST | 2026-08-10 → 2027-02-06 (+180d) | 2026-08-11 → 2027-02-07 (+180d) |  |  |  |

| ID | Task | Start | Finish | Complete | Other |
| --- | --- | --- | --- | --- | --- |
| RHD4CZ5L08ST1502 | Backfilling and warning tape works for GRP Pipe Line 600 mm - (RD-L-8)-Z5-L08-ST | 2026-08-12 → 2027-02-08 (+180d) | 2026-08-13 → 2027-02-09 (+180d) |  |  |
| 4304 | **RHD4-02-002-L08-(ST)-GRP Pipes - 500 mm diameter** | 2026-08-05 → 2026-08-04 (-1d) | 2026-08-16 → 2027-02-02 (+170d) |  |  |
| RHD4CZ5L08ST1101 | Excavation works for GRP Pipe Line 500 mm - (RD-L-8)-Z5-L08-ST | 2026-08-05 → 2026-08-04 A (-1d) | 2026-08-06 → 2026-08-05 A (-1d) | 0% → 100% |  |
| RHD4CZ5L08ST1201 | Bedding works for GRP Pipe Line 500 mm - (RD-L-8)-Z5-L08-ST | 2026-08-08 → 2026-08-06 A (-2d) | 2026-08-09 → 2026-08-08 A (-1d) | 0% → 100% |  |
| RHD4CZ5L08ST1301 | Installing for GRP Pipe Line 500 mm - (RD-L-8)-Z5-L08-ST | 2026-08-10 → 2026-08-09 A (-1d) | 2026-08-11 → 2026-08-10 A (-1d) | 0% → 100% |  |
| RHD4CZ5L08ST1501 | Backfilling and warning tape works for GRP Pipe Line 500 mm - (RD-L-8)-Z5-L08-ST | 2026-08-15 A | 2026-08-16 → 2026-09-20 A (+35d) | 0% → 100% |  |
| RHD4CZ5L08ST1401 | Primary Test for GRP Pipe Line 500 mm - (RD-L-8)-Z5-L08-ST | 2026-08-12 → 2027-02-01 (+173d) | 2026-08-13 → 2027-02-02 (+173d) |  |  |
| 4303 | **RHD4-02-002-L08-(ST)-GRP Pipes - 400 mm diameter** |  | 2026-08-18 → 2027-02-02 (+168d) |  |  |
| RHD4CZ5L08ST1100 | Excavation works for GRP Pipe Line 400 mm - (RD-L-8)-Z5-L08-ST | 2026-08-08 A | 2026-08-09 → 2026-09-20 A (+42d) | 0% → 100% |  |
| RHD4CZ5L08ST1200 | Bedding works for GRP Pipe Line 400 mm - (RD-L-8)-Z5-L08-ST | 2026-08-10 A | 2026-08-11 → 2026-09-21 A (+41d) | 0% → 100% |  |
| RHD4CZ5L08ST1300 | Installing for GRP Pipe Line 400 mm - (RD-L-8)-Z5-L08-ST | 2026-08-12 A | 2026-08-13 → 2026-09-22 A (+40d) | 0% → 100% |  |
| RHD4CZ5L08ST1500 | Backfilling and warning tape works for GRP Pipe Line 400 mm - (RD-L-8)-Z5-L08-ST | 2026-08-17 A | 2026-08-18 → 2026-09-24 A (+37d) | 0% → 100% |  |
| RHD4CZ5L08ST1400 | Primary Test for GRP Pipe Line 400 mm - (RD-L-8)-Z5-L08-ST | 2026-08-15 → 2027-02-01 (+170d) | 2026-08-16 → 2027-02-02 (+170d) |  |  |
| 4317 | **RHD4-02-002-L08-(ST)-UPVC Pipes - 300 mm diameter** | 2026-08-18 → 2026-08-04 (-14d) | 2026-08-30 → 2027-02-21 (+175d) |  |  |
| RHD4CZ5L08ST2100 | Excavation works for UPVC Pipe Line 300 mm - (RD-L-8)-Z5-L08-ST | 2026-08-18 → 2026-08-04 A (-14d) | 2026-08-19 → 2027-02-09 (+174d) | 0% → 92% | resources Skilled labor [17.97 h]; Unskilled Labor [17.97 h]; Equipment Opreator [21.56 h]; Excavator-Poclain [17.97 h]; Dump Truck [3.59 h]; UPVC (300mm Diameter) - ST - Depth less than 1.5 [40.81 m]; UPVC (300mm Diameter) - ST - Depth: 1.51m - 2.5m → Skilled labor [17.97 h]; Unskilled Labor [17.97 h]; Equipment Opreator [21.6 h]; Excavator-Poclain [17.97 h]; Dump Truck [3.59 h]; UPVC (300mm Diameter) - ST - Depth less than 1.5 [40.81 m]; UPVC (300mm Diameter) - ST - Depth: 1.51m - 2.5m |
| RHD4CZ5L08ST2300 | Installing for UPVC Pipe Line 300 mm - (RD-L-8)-Z5-L08-ST | 2026-08-23 → 2026-08-08 A (-15d) | 2026-08-24 → 2027-02-14 (+174d) | 0% → 92% |  |
| RHD4CZ5L08ST2200 | Bedding works for UPVC Pipe Line 300 mm - (RD-L-8)-Z5-L08-ST | 2026-08-20 → 2026-09-06 A (+17d) | 2026-08-22 → 2027-02-11 (+173d) | 0% → 92% | resources Skilled labor [15.25 h]; Unskilled Labor [30.38 h]; Equipment Opreator [30.38 h]; Excavator-Poclain [15.25 h]; Dump Truck [15.25 h]; UPVC (300mm Diameter) - ST - Depth less than 1.5 [20.4 m]; UPVC (300mm Diameter) - ST - Depth: 1.51m - 2.5m → Skilled labor [15.25 h]; Unskilled Labor [30.4 h]; Equipment Opreator [30.4 h]; Excavator-Poclain [15.25 h]; Dump Truck [15.25 h]; UPVC (300mm Diameter) - ST - Depth less than 1.5 [20.4 m]; UPVC (300mm Diameter) - ST - Depth: 1.51m - 2.5m |
| RHD4CZ5L08ST2400 | Primary Test for UPVC Pipe Line 300 mm - (RD-L-8)-Z5-L08-ST | 2026-08-25 → 2027-02-15 (+174d) | 2026-08-26 → 2027-02-16 (+174d) |  | resources Unskilled Labor [9.58 h]; Plumber [9.58 h]; Equipment Opreator [9.58 h]; Water Truck [9.58 h]; UPVC (300mm Diameter) - ST - Depth less than 1.5 [81.62 m]; UPVC (300mm Diameter) - ST - Depth: 1.51m - 2.5m → Unskilled Labor [9.6 h]; Plumber [9.6 h]; Equipment Opreator [9.6 h]; Water Truck [9.6 h]; UPVC (300mm Diameter) - ST - Depth less than 1.5 [81.62 m]; UPVC (300mm Diameter) - ST - Depth: 1.51m - 2.5m |
| RHD4CZ5L08ST2500 | Backfilling and warning tape works for UPVC Pipe Line 300 mm - (RD-L-8)-Z5-L08-ST | 2026-08-27 → 2027-02-18 (+175d) | 2026-08-30 → 2027-02-21 (+175d) |  |  |
| 4325 | **RHD4-02-002-L08-(ST)-Concrete Encasement** | 2026-08-23 → 2027-02-16 (+177d) | 2026-08-24 → 2027-02-17 (+177d) |  |  |
| RHD4CZ5L08ST6100 | Pipe Encasement for Storm Pipelines - (RD-L-8)-Z5-L08-ST | 2026-08-23 → 2027-02-16 (+177d) | 2026-08-24 → 2027-02-17 (+177d) |  | resources Skilled labor [6.43 h]; Unskilled Labor [6.43 h]; Equipment Opreator [7.08 h]; Concrete Mixer Truck [0.65 h]; Dump Truck [6.43 h]; Pipe Encasement - ST [118.23 m3] → Skilled labor [6.4 h]; Unskilled Labor [6.4 h]; Equipment Opreator [7.08 h]; Concrete Mixer Truck [0.65 h]; Dump Truck [6.4 h]; Pipe Encasement - ST [118.23 m3] |
| 4326 | **RHD4-02-002-Z5-L08-Catch Basin - ST** | 2026-08-08 → 2026-08-04 (-4d) | 2026-08-26 → 2027-02-16 (+174d) |  |  |
| 4327 | **RHD4-02-002-L08-(ST)-Single Catch Basin Works** | 2026-08-08 → 2026-08-04 (-4d) | 2026-08-26 → 2027-02-16 (+174d) |  |  |
| RHD4CZ5L08ST7100 | Excavation works for Single Catch Basin - (RD-L-8)-Z5-L08-ST | 2026-08-08 → 2026-08-04 A (-4d) | 2026-08-10 → 2026-10-27 A (+78d) | 0% → 100% | resources Skilled labor [26.14 h]; Unskilled Labor [52.27 h]; Equipment Opreator [39.21 h]; Excavator-Poclain [26.14 h]; Dump Truck [13.07 h]; Single Catch basin - ST [6 nr] → Skilled labor [26.14 h]; Unskilled Labor [52.27 h]; Equipment Opreator [39.2 h]; Excavator-Poclain [26.14 h]; Dump Truck [13.07 h]; Single Catch basin - ST [6 nr] |
| RHD4CZ5L08ST7200 | PC Blinding, Installation and Pipe connection for Single Catch Basin - (RD-L-8)-Z5-L08-ST | 2026-08-11 → 2026-08-06 A (-5d) | 2026-08-13 → 2027-02-03 (+174d) | 0% → 96% |  |
| RHD4CZ5L08ST7300 | Rings & C.Slab & Final Backfill for Single Catch Basin - (RD-L-8)-Z5-L08-ST | 2026-08-15 → 2026-10-28 A (+74d) | 2026-08-17 → 2027-02-07 (+174d) | 0% → 8% | resources Skilled labor [32.67 h]; Unskilled Labor [65.34 h]; Equipment Opreator [39.21 h]; Boom Truck [6.53 h]; Bobcat [32.67 h]; Single Catch basin - ST [8.4 nr] → Skilled labor [32.67 h]; Unskilled Labor [65.34 h]; Equipment Opreator [39.2 h]; Boom Truck [6.53 h]; Bobcat [32.67 h]; Single Catch basin - ST [8.4 nr] |
| RHD4CZ5L08ST7400 | Steel Cover for Single Catch Basin - (RD-L-8)-Z5-L08-ST | 2026-08-18 → 2027-02-08 (+174d) | 2026-08-20 → 2027-02-10 (+174d) |  |  |
| RHD4CZ5L08ST7500 | Finishing and Insulation works for Single Catch Basin - (RD-L-8)-Z5-L08-ST | 2026-08-22 → 2027-02-11 (+173d) | 2026-08-26 → 2027-02-16 (+174d) |  |  |
| 4299 | **RHD4-02-002-Z5-L08-Concrete Box Culvert - ST** | 2026-08-01 → 2026-06-11 (-51d) | 2026-10-12 → 2027-03-22 (+161d) |  |  |
| 4300 | **RHD4-02-002-L08-(ST)-Concrete Box Culvert** | 2026-08-01 → 2026-06-11 (-51d) | 2026-10-12 → 2027-03-22 (+161d) |  |  |
| RHD4CZ5L08ST4100 | Excavation works for Box Culvert - (RD-L-8)-Z5-L08-ST(Completed) | 2026-08-01 → 2026-06-11 A (-51d) | 2026-09-22 → 2026-06-13 A (-101d) | 0% → 100% |  |
| RHD4CZ5L08ST4200 | PC works for Box Culvert - (RD-L-8)-Z5-L08-ST(Completed) | 2026-08-01 → 2026-06-15 A (-47d) | 2026-09-19 → 2026-06-16 A (-95d) | 0% → 100% |  |
| RHD4CZ5L08ST4400 | Raft works for Box Culvert - (RD-L-8)-Z5-L08-ST(Completed) | 2026-08-01 → 2026-07-11 A (-21d) | 2026-08-24 → 2026-07-16 A (-39d) | 0% → 100% |  |
| RHD4CZ5L08ST4500 | Wall and slab works for Box Culvert - (RD-L-8)-Z5-L08-ST | 2026-09-24 → 2026-08-04 A (-51d) | 2026-09-26 → 2026-09-21 A (-5d) | 0% → 100% |  |
| RHD4CZ5L08ST4600 | Insulation and Testing for Box Culvert - (RD-L-8)-Z5-L08-ST | 2026-10-11 → 2026-10-20 A (+9d) | 2026-10-12 → 2026-10-22 A (+10d) | 0% → 100% |  |
| RHD4CZ5L08ST4700 | Backfilling works for Box Culvert - (RD-L-8)-Z5-L08-ST | 2026-10-07 → 2026-10-23 A (+16d) | 2026-10-10 → 2027-03-22 (+163d) | 0% → 50% |  |
| 4301 | **RHD4-02-002-L08-(ST)-Concrete Chambers** | 2026-09-27 → 2026-08-20 (-38d) | 2026-10-10 → 2027-03-22 (+163d) |  |  |
| RHD4CZ5L08ST5100 | Excavation and Bedding for Concrete Chambers - for Box Culvert - (RD-L-8)-Z5-L08-ST | 2026-09-27 → 2026-08-20 A (-38d) | 2026-09-29 → 2027-03-08 (+160d) | 0% → 50% |  |
| RHD4CZ5L08ST5200 | PC works for Concrete Chambers - for Box Culvert - (RD-L-8)-Z5-L08-ST | 2026-09-30 → 2026-08-25 A (-36d) | 2026-10-03 → 2027-03-15 (+163d) | 0% → 50% |  |
| RHD4CZ5L08ST5300 | Installation for Concrete Chambers - for Box Culvert - (RD-L-8)-Z5-L08-ST | 2026-10-04 → 2026-08-30 A (-35d) | 2026-10-06 → 2027-03-18 (+163d) | 0% → 50% |  |
| RHD4CZ5L08ST5400 | Backfilling works for Concrete Chambers - for Box Culvert - (RD-L-8)-Z5-L08-ST | 2026-10-07 → 2027-03-20 (+164d) | 2026-10-10 → 2027-03-22 (+163d) |  |  |
| 4351 | **RHD4-02-002-Z5-L08-Sewage Network - SW** | 2026-10-13 → 2026-08-09 (-65d) | 2026-12-10 → 2027-05-24 (+165d) |  |  |
| 957 | **RHD4-02-002-L08-(SW)-MH Works - 1200 mm diameter with Back drop** | 2026-10-13 → 2026-08-11 (-63d) | 2026-11-10 → 2027-04-15 (+156d) |  |  |
| RHD4CZ5L08SW3101 | Excavation and PC Blinding works for MH 1200 mm - (RD-L-8)-Z5-L08-SW | 2026-10-13 → 2026-08-11 A (-63d) | 2026-10-17 → 2026-08-12 A (-66d) | 0% → 100% |  |
| RHD4CZ5L08SW3201 | Installation of Base for MH 1200 mm - (RD-L-8)-Z5-L08-SW | 2026-10-18 → 2026-09-20 A (-28d) | 2026-10-24 → 2027-03-29 (+156d) | 0% → 40% | resources Skilled labor [59.9 h]; Unskilled Labor [59.9 h]; Equipment Opreator [23.96 h]; Boom Truck [11.98 h]; Concrete Mixer Truck [11.98 h]; MH (1200mm Diameter) - SW - depth 2.51- 3.5 m with back drop [0.75 nr]; MH (1200mm Diameter) - SW - depth 3.51 -4.5 m with back drop [1 nr] → Skilled labor [59.9 h]; Unskilled Labor [59.9 h]; Equipment Opreator [23.96 h]; Boom Truck [12 h]; Concrete Mixer Truck [12 h]; MH (1200mm Diameter) - SW - depth 2.51- 3.5 m with back drop [0.75 nr]; MH (1200mm Diameter) - SW - depth 3.51 -4.5 m with back drop [1 nr] |
| RHD4CZ5L08SW3301 | MH Ring and C.Slab works and Backfilling works for MH 1200 mm - (RD-L-8)-Z5-L08-SW | 2026-10-25 → 2027-03-30 (+156d) | 2026-10-31 → 2027-04-05 (+156d) |  |  |
| RHD4CZ5L08SW3401 | Steel Cover for MH 1200 mm - (RD-L-8)-Z5-L08-SW | 2026-11-01 → 2027-04-06 (+156d) | 2026-11-03 → 2027-04-08 (+156d) |  |  |
| RHD4CZ5L08SW3501 | Finishing, Benching, Testing works for MH 1200 mm - (RD-L-8)-Z5-L08-SW | 2026-11-04 → 2027-04-10 (+157d) | 2026-11-10 → 2027-04-15 (+156d) |  | resources Skilled labor [59.9 h]; Unskilled Labor [119.79 h]; Plumber [59.9 h]; Equipment Opreator [11.98 h]; Water Truck [11.98 h]; MH (1200mm Diameter) - SW - depth 2.51- 3.5 m with back drop [0.3 nr]; MH (1200mm Diameter) - SW - depth 3.51 -4.5 m with back drop [0.4 nr] → Skilled labor [59.9 h]; Unskilled Labor [119.79 h]; Plumber [59.9 h]; Equipment Opreator [12 h]; Water Truck [12 h]; MH (1200mm Diameter) - SW - depth 2.51- 3.5 m with back drop [0.3 nr]; MH (1200mm Diameter) - SW - depth 3.51 -4.5 m with back drop [0.4 nr] |
| 4361 | **RHD4-02-002-L08-(SW)-MH Works - 1200 mm diameter** | 2026-10-13 → 2026-08-11 (-63d) | 2026-11-30 → 2027-05-11 (+162d) |  |  |
| RHD4CZ5L08SW3100 | Excavation and PC Blinding works for MH 1200 mm - (RD-L-8)-Z5-L08-SW | 2026-10-13 → 2026-08-11 A (-63d) | 2026-10-20 → 2027-03-25 (+156d) | 0% → 75% | resources Skilled labor [67.19 h]; Unskilled Labor [67.19 h]; Equipment Opreator [107.49 h]; Excavator-Poclain [67.19 h]; Water Truck [6.75 h]; Dump Truck [33.54 h]; MH (1200mm Diameter) - SW - depth 0 - 1.5m [0.5 nr]; MH (1200mm Diameter) - SW - depth 1.51 - 2.5m [1.25 nr]; MH (1200mm Diameter) - SW - depth 3.51 -4.5m [1.5 nr] → Skilled labor [67.2 h]; Unskilled Labor [67.2 h]; Equipment Opreator [107.49 h]; Excavator-Poclain [67.2 h]; Water Truck [6.75 h]; Dump Truck [33.54 h]; MH (1200mm Diameter) - SW - depth 0 - 1.5m [0.5 nr]; MH (1200mm Diameter) - SW - depth 1.51 - 2.5m [1.25 nr]; MH (1200mm Diameter) - SW - depth 3.51 -4.5m [1.5 nr] |
| RHD4CZ5L08SW3200 | Installation of Base for MH 1200 mm - (RD-L-8)-Z5-L08-SW | 2026-10-21 → 2026-08-12 A (-70d) | 2026-11-01 → 2027-03-31 (+150d) | 0% → 75% |  |
| RHD4CZ5L08SW3300 | MH Ring and C.Slab works and Backfilling works for MH 1200 mm - (RD-L-8)-Z5-L08-SW | 2026-11-02 → 2027-04-13 (+162d) | 2026-11-12 → 2027-04-24 (+163d) |  |  |
| RHD4CZ5L08SW3400 | Steel Cover for MH 1200 mm - (RD-L-8)-Z5-L08-SW | 2026-11-14 → 2027-04-25 (+162d) | 2026-11-18 → 2027-04-29 (+162d) |  | resources Skilled labor [47.16 h]; Unskilled Labor [94.42 h]; Equipment Opreator [9.47 h]; Boom Truck [9.47 h]; MH (1200mm Diameter) - SW - depth 0 - 1.5m [0.1 nr]; MH (1200mm Diameter) - SW - depth 1.51 - 2.5m [0.25 nr]; MH (1200mm Diameter) - SW - depth 3.51 -4.5m [0.3 nr] → Skilled labor [47.16 h]; Unskilled Labor [94.4 h]; Equipment Opreator [9.47 h]; Boom Truck [9.47 h]; MH (1200mm Diameter) - SW - depth 0 - 1.5m [0.1 nr]; MH (1200mm Diameter) - SW - depth 1.51 - 2.5m [0.25 nr]; MH (1200mm Diameter) - SW - depth 3.51 -4.5m [0.3 nr] |
| RHD4CZ5L08SW3500 | Finishing, Benching, Testing works for MH 1200 mm - (RD-L-8)-Z5-L08-SW | 2026-11-19 → 2027-05-01 (+163d) | 2026-11-30 → 2027-05-11 (+162d) |  |  |
| 4352 | **RHD4-02-002-L08-(SW)-GRP Pipes - 300 mm diameter** | 2026-11-02 → 2026-08-09 (-85d) | 2026-11-30 → 2027-05-06 (+157d) |  |  |
| RHD4CZ5L08SW1100 | Excavation works for GRP Pipe Line 300 mm - (RD-L-8)-Z5-L08-SW | 2026-11-02 → 2026-08-09 A (-85d) | 2026-11-07 → 2027-04-04 (+148d) | 0% → 70% |  |
| RHD4CZ5L08SW1200 | Bedding works for GRP Pipe Line 300 mm - (RD-L-8)-Z5-L08-SW | 2026-11-08 → 2026-08-11 A (-89d) | 2026-11-12 → 2027-04-07 (+146d) | 0% → 70% | resources Skilled labor [50.86 h]; Unskilled Labor [101.61 h]; Equipment Opreator [101.61 h]; Excavator-Poclain [50.86 h]; Dump Truck [50.86 h]; GRP (300mm Diameter) - SW - Depth: 1.51m - 2.5m; GRP (300mm Diameter) - SW - Depth: 2.51m - 3.5m [30.06 m]; GRP (300mm Diameter) - SW - Depth: 3.51m - 4.5m → Skilled labor [50.86 h]; Unskilled Labor [101.6 h]; Equipment Opreator [101.6 h]; Excavator-Poclain [50.86 h]; Dump Truck [50.86 h]; GRP (300mm Diameter) - SW - Depth: 1.51m - 2.5m; GRP (300mm Diameter) - SW - Depth: 2.51m - 3.5m [30.06 m]; GRP (300mm Diameter) - SW - Depth: 3.51m - 4.5m |
| RHD4CZ5L08SW1300 | Installing for GRP Pipe Line 300 mm - (RD-L-8)-Z5-L08-SW | 2026-11-14 → 2026-08-13 A (-93d) | 2026-11-18 → 2027-04-27 (+160d) | 0% → 70% | resources Unskilled Labor [101.61 h]; Plumber [50.86 h]; Equipment Opreator [50.86 h]; Boom Truck [50.86 h]; GRP (300mm Diameter) - SW - Depth: 1.51m - 2.5m; GRP (300mm Diameter) - SW - Depth: 2.51m - 3.5m [240.48 m]; GRP (300mm Diameter) - SW - Depth: 3.51m - 4.5m → Unskilled Labor [101.6 h]; Plumber [50.86 h]; Equipment Opreator [50.86 h]; Boom Truck [50.86 h]; GRP (300mm Diameter) - SW - Depth: 1.51m - 2.5m; GRP (300mm Diameter) - SW - Depth: 2.51m - 3.5m [240.48 m]; GRP (300mm Diameter) - SW - Depth: 3.51m - 4.5m |
| RHD4CZ5L08SW1500 | Backfilling and warning tape works for GRP Pipe Line 300 mm - (RD-L-8)-Z5-L08-SW | 2026-11-25 → 2026-08-17 A (-100d) | 2026-11-30 → 2027-05-06 (+157d) | 0% → 60% | resources Skilled labor [50.86 h]; Unskilled Labor [101.61 h]; Equipment Opreator [101.61 h]; Excavator-Poclain [50.86 h]; Dump Truck [50.86 h]; GRP (300mm Diameter) - SW - Depth: 1.51m - 2.5m; GRP (300mm Diameter) - SW - Depth: 2.51m - 3.5m [120.24 m]; GRP (300mm Diameter) - SW - Depth: 3.51m - 4.5m → Skilled labor [50.86 h]; Unskilled Labor [101.6 h]; Equipment Opreator [101.6 h]; Excavator-Poclain [50.86 h]; Dump Truck [50.86 h]; GRP (300mm Diameter) - SW - Depth: 1.51m - 2.5m; GRP (300mm Diameter) - SW - Depth: 2.51m - 3.5m [120.24 m]; GRP (300mm Diameter) - SW - Depth: 3.51m - 4.5m |
| RHD4CZ5L08SW1400 | Primary Test for GRP Pipe Line 300 mm - (RD-L-8)-Z5-L08-SW | 2026-11-19 → 2027-04-28 (+160d) | 2026-11-24 → 2027-05-03 (+160d) |  |  |
| 4357 | **RHD4-02-002-L08-(SW)-UPVC Pipes - 200 mm diameter** | 2026-11-08 → 2026-08-13 (-87d) | 2026-12-02 → 2027-05-09 (+158d) |  |  |
| RHD4CZ5L08SW2100 | Excavation works for UPVC Pipe Line 200 mm - (RD-L-8)-Z5-L08-SW | 2026-11-08 → 2026-08-13 A (-87d) | 2026-11-09 → 2027-04-06 (+148d) | 0% → 70% |  |
| RHD4CZ5L08SW2200 | Bedding works for UPVC Pipe Line 200 mm - (RD-L-8)-Z5-L08-SW | 2026-11-14 → 2026-08-15 A (-91d) | 2026-11-15 → 2027-04-10 (+146d) | 0% → 71% |  |
| RHD4CZ5L08SW2300 | Installing for UPVC Pipe Line 200 mm - (RD-L-8)-Z5-L08-SW | 2026-11-19 → 2026-08-17 A (-94d) | 2026-11-21 → 2027-04-29 (+159d) | 0% → 72% | resources Unskilled Labor [27.23 h]; Plumber [13.61 h]; Equipment Opreator [13.61 h]; Boom Truck [13.61 h]; UPVC (200mm Diameter) - SW - Depth: less than 1.5m [97.45 m]; UPVC (200mm Diameter) - SW - Depth: 1.51m - 2.5m → Unskilled Labor [27.2 h]; Plumber [13.6 h]; Equipment Opreator [13.6 h]; Boom Truck [13.6 h]; UPVC (200mm Diameter) - SW - Depth: less than 1.5m [97.45 m]; UPVC (200mm Diameter) - SW - Depth: 1.51m - 2.5m |
| RHD4CZ5L08SW2500 | Backfilling and warning tape works for UPVC Pipe Line 200 mm - (RD-L-8)-Z5-L08-SW | 2026-12-01 → 2026-08-19 A (-104d) | 2026-12-02 → 2027-05-09 (+158d) | 0% → 71% |  |
| RHD4CZ5L08SW2400 | Primary Test for UPVC Pipe Line 200 mm - (RD-L-8)-Z5-L08-SW | 2026-11-25 → 2027-05-04 (+160d) | 2026-11-26 → 2027-05-05 (+160d) |  | resources Unskilled Labor [6.43 h]; Plumber [6.43 h]; Equipment Opreator [6.43 h]; Water Truck [6.43 h]; UPVC (200mm Diameter) - SW - Depth: less than 1.5m [43.31 m]; UPVC (200mm Diameter) - SW - Depth: 1.51m - 2.5m → Unskilled Labor [6.4 h]; Plumber [6.4 h]; Equipment Opreator [6.4 h]; Water Truck [6.4 h]; UPVC (200mm Diameter) - SW - Depth: less than 1.5m [43.31 m]; UPVC (200mm Diameter) - SW - Depth: 1.51m - 2.5m |
| 4358 | **RHD4-02-002-L08-(SW)-HDPE Pipes - 250 mm diameter** | 2026-11-02 → 2027-04-01 (+150d) | 2026-11-29 → 2027-05-08 (+160d) |  |  |
| RHD4CZ5L08SW2600 | Excavation works for HDPE Force Main Pipeline 250 mm - (RD-L-8)-Z5-L08-SW | 2026-11-02 → 2027-04-01 (+150d) | 2026-11-04 → 2027-04-04 (+151d) |  |  |
| RHD4CZ5L08SW2700 | Bedding works for HDPE Force Main Pipeline 250 mm - (RD-L-8)-Z5-L08-SW | 2026-11-08 → 2027-04-05 (+148d) | 2026-11-10 → 2027-04-07 (+148d) |  |  |
| RHD4CZ5L08SW2800 | Installing for HDPE Force Main Pipeline 250 mm - (RD-L-8)-Z5-L08-SW | 2026-11-14 → 2027-04-25 (+162d) | 2026-11-18 → 2027-04-29 (+162d) |  |  |

| ID | Task | Start | Finish | Duration | Complete | Other |
| --- | --- | --- | --- | --- | --- | --- |
| RHD4CZ5L08SW2900 | Primary Test for HDPE Force Main Pipeline 250 mm - (RD-L-8)-Z5-L08-SW | 2026-11-19 → 2027-05-01 (+163d) | 2026-11-21 → 2027-05-02 (+162d) |  |  |  |
| RHD4CZ5L08SW3000 | Backfilling and warning tape works for HDPE Force Main Pipeline 250 mm - (RD-L-8)-Z5-L08-SW | 2026-11-25 → 2027-05-04 (+160d) | 2026-11-29 → 2027-05-08 (+160d) |  |  |  |
| 4360 | **RHD4-02-002-L08-(SW)-Concrete Encasement** | 2026-11-19 → 2027-04-28 (+160d) | 2026-12-10 → 2027-05-24 (+165d) |  |  |  |
| RHD4CZ5L08SW6100 | Pipe Encasement for Sewage Pipelines - (RD-L-8)-Z5-L08-SW | 2026-11-19 → 2027-04-28 (+160d) | 2026-12-10 → 2027-05-24 (+165d) |  |  |  |
| 4388 | **RHD4-02-002-Z5-L08-Potable Network - PT** | 2026-11-14 → 2026-08-04 (-102d) | 2026-12-16 → 2027-06-01 (+167d) |  |  |  |
| 4389 | **RHD4-02-002-L08-(PT)-HDPE Pipes - 110 mm diameter** | 2026-11-14 → 2026-08-04 (-102d) | 2026-11-24 → 2027-05-05 (+162d) |  |  |  |
| RHD4CZ5L08PT1100 | Excavation works for HDPE Pipline 110 mm - (RD-L-8)-Z5-L08-PT | 2026-11-14 → 2026-08-04 A (-102d) | 2026-11-15 → 2027-04-26 (+162d) |  | 0% → 66% |  |
| RHD4CZ5L08PT1200 | Bedding works for HDPE Pipline 110 mm - (RD-L-8)-Z5-L08-PT | 2026-11-16 → 2027-04-27 (+162d) | 2026-11-17 → 2027-04-28 (+162d) |  |  |  |
| RHD4CZ5L08PT1300 | Installing for HDPE Pipline 110 mm - (RD-L-8)-Z5-L08-PT | 2026-11-18 → 2027-04-29 (+162d) | 2026-11-19 → 2027-05-01 (+163d) |  |  |  |
| RHD4CZ5L08PT1400 | Primary Test for HDPE Pipline 110 mm - (RD-L-8)-Z5-L08-PT | 2026-11-21 → 2027-05-02 (+162d) | 2026-11-22 → 2027-05-03 (+162d) |  |  |  |
| RHD4CZ5L08PT1500 | Backfilling and warning tape works for HDPE Pipline 110 mm - (RD-L-8)-Z5-L08-PT | 2026-11-23 → 2027-05-04 (+162d) | 2026-11-24 → 2027-05-05 (+162d) |  |  |  |
| 4390 | **RHD4-02-002-L08-(PT)-HDPE Pipes - 160 mm diameter** | 2026-11-16 → 2027-04-27 (+162d) | 2026-12-07 → 2027-05-23 (+167d) |  |  |  |
| RHD4CZ5L08PT1101 | Excavation works for HDPE Pipline 160 mm - (RD-L-8)-Z5-L08-PT | 2026-11-16 → 2027-04-27 (+162d) | 2026-11-19 → 2027-05-01 (+163d) |  |  |  |
| RHD4CZ5L08PT1201 | Bedding works for HDPE Pipline 160 mm - (RD-L-8)-Z5-L08-PT | 2026-11-21 → 2027-05-02 (+162d) | 2026-11-23 → 2027-05-04 (+162d) |  |  |  |
| RHD4CZ5L08PT1301 | Installing for HDPE Pipline 160 mm - (RD-L-8)-Z5-L08-PT | 2026-11-24 → 2027-05-05 (+162d) | 2026-11-30 → 2027-05-11 (+162d) |  |  |  |
| RHD4CZ5L08PT1401 | Primary Test for HDPE Pipline 160 mm - (RD-L-8)-Z5-L08-PT | 2026-12-01 → 2027-05-12 (+162d) | 2026-12-02 → 2027-05-13 (+162d) |  |  |  |
| RHD4CZ5L08PT1501 | Backfilling and warning tape works for HDPE Pipline 160 mm - (RD-L-8)-Z5-L08-PT | 2026-12-03 → 2027-05-19 (+167d) | 2026-12-07 → 2027-05-23 (+167d) |  |  | resources Skilled labor [42.36 h]; Unskilled Labor [84.73 h]; Equipment Opreator [84.73 h]; Excavator-Poclain [42.36 h]; Dump Truck [42.36 h]; HDPE (160mm Diameter) - PT - Depth: less than 1.5m [155.67 m] → Skilled labor [42.4 h]; Unskilled Labor [84.73 h]; Equipment Opreator [84.73 h]; Excavator-Poclain [42.4 h]; Dump Truck [42.4 h]; HDPE (160mm Diameter) - PT - Depth: less than 1.5m [155.67 m] |
| 4394 | **RHD4-02-002-L08-(PT)-Gate Valves (Direct Buried)** | 2026-11-24 → 2027-05-05 (+162d) | 2026-11-30 → 2027-05-11 (+162d) |  |  |  |
| RHD4CZ5L08PT3100 | Installation for Direct Buried Gate Valves - (RD-L-8)-Z5-L08-PT | 2026-11-24 → 2027-05-05 (+162d) | 2026-11-26 → 2027-05-08 (+163d) |  |  | resources Unskilled Labor [27.23 h]; Plumber [27.23 h]; Gate valves dia 100 mm - PT [2.7 nr]; Gate valves dia 150 mm - PT [1.8 nr] → Unskilled Labor [27.2 h]; Plumber [27.2 h]; Gate valves dia 100 mm - PT [2.7 nr]; Gate valves dia 150 mm - PT [1.8 nr] |
| RHD4CZ5L08PT3200 | Stem and Service box for Direct Buried Gate Valves - (RD-L-8)-Z5-L08-PT | 2026-11-28 → 2027-05-09 (+162d) | 2026-11-30 → 2027-05-11 (+162d) |  |  | resources Unskilled Labor [27.23 h]; Plumber [27.23 h]; Gate valves dia 100 mm - PT [0.3 nr]; Gate valves dia 150 mm - PT [0.2 nr] → Unskilled Labor [27.2 h]; Plumber [27.2 h]; Gate valves dia 100 mm - PT [0.3 nr]; Gate valves dia 150 mm - PT [0.2 nr] |
| 4399 | **RHD4-02-002-L08-(PT)-Air Valve Chambers** | 2026-11-21 → 2027-05-02 (+162d) | 2026-11-29 → 2027-05-10 (+162d) |  |  |  |
| RHD4CZ5L08PT2102 | Excavation and Bedding for Air Valve Chambers for Potable Water Network - (RD-L-8)-Z5-L08-PT | 2026-11-21 → 2027-05-02 (+162d) | 2026-11-22 → 2027-05-03 (+162d) |  |  |  |
| RHD4CZ5L08PT2202 | PC works for Air Valve Chambers for Potable Water Network - (RD-L-8)-Z5-L08-PT | 2026-11-23 → 2027-05-04 (+162d) | 2026-11-24 → 2027-05-05 (+162d) |  |  |  |
| RHD4CZ5L08PT2302 | Installation for Air Valve Chambers for Potable Water Network - (RD-L-8)-Z5-L08-PT | 2026-11-25 → 2027-05-06 (+162d) | 2026-11-26 → 2027-05-08 (+163d) |  |  |  |
| RHD4CZ5L08PT2402 | Backfilling works for Air Valve Chambers for Potable Water Network - (RD-L-8)-Z5-L08-PT | 2026-11-28 → 2027-05-09 (+162d) | 2026-11-29 → 2027-05-10 (+162d) |  |  |  |
| 4400 | **RHD4-02-002-L08-(PT)-Air Valves** | 2026-11-28 → 2027-05-09 (+162d) | 2026-12-01 → 2027-05-12 (+162d) |  |  |  |
| RHD4CZ5L08PT3103 | Installation for Air Valves for Potable Water Network - (RD-L-8)-Z5-L08-PT | 2026-11-28 → 2027-05-09 (+162d) | 2026-11-29 → 2027-05-10 (+162d) |  |  |  |
| RHD4CZ5L08PT3203 | Stem and Service box for Air Valves for Potable Water Network - (RD-L-8)-Z5-L08-PT | 2026-11-30 → 2027-05-11 (+162d) | 2026-12-01 → 2027-05-12 (+162d) |  |  |  |
| 4401 | **RHD4-02-002-L08-(PT)-Fire Hydrant** | 2026-11-25 → 2027-05-06 (+162d) | 2026-12-16 → 2027-06-01 (+167d) |  |  |  |
| RHD4CZ5L08PT4100 | Excavation and Bedding and Pipe Installation for Fire Hydrant - (RD-L-8)-Z5-L08-PT | 2026-11-25 → 2027-05-06 (+162d) | 2026-11-30 → 2027-05-11 (+162d) |  |  | resources Skilled labor [54.45 h]; Unskilled Labor [54.45 h]; Plumber [54.45 h]; Equipment Opreator [27.23 h]; Excavator-Poclain [27.23 h]; 3-outlet fire hydrant (2 x 2.5 inch and 1 x 4.5 inch) in the form of a separate dry vacuum cylinder [1 nr] → Skilled labor [54.45 h]; Unskilled Labor [54.45 h]; Plumber [54.45 h]; Equipment Opreator [27.2 h]; Excavator-Poclain [27.2 h]; 3-outlet fire hydrant (2 x 2.5 inch and 1 x 4.5 inch) in the form of a separate dry vacuum cylinder [1 nr] |
| RHD4CZ5L08PT4200 | Valve Installation for Fire Hydrant - (RD-L-8)-Z5-L08-PT | 2026-12-01 → 2027-05-12 (+162d) | 2026-12-05 → 2027-05-20 (+166d) |  |  |  |
| RHD4CZ5L08PT4300 | Stem for Fire Hydrant - (RD-L-8)-Z5-L08-PT | 2026-12-06 → 2027-05-22 (+167d) | 2026-12-09 → 2027-05-25 (+167d) |  |  |  |
| RHD4CZ5L08PT4400 | Fire Installation for Fire Hydrant - (RD-L-8)-Z5-L08-PT | 2026-12-10 → 2027-05-26 (+167d) | 2026-12-14 → 2027-05-30 (+167d) |  |  |  |
| RHD4CZ5L08PT4500 | Protection Barriers for Fire Hydrant - (RD-L-8)-Z5-L08-PT | 2026-12-15 → 2027-05-31 (+167d) | 2026-12-16 → 2027-06-01 (+167d) |  |  |  |
| 4402 | **RHD4-02-002-L08-(PT)-Concrete Encasement** | 2026-11-29 → 2027-05-10 (+162d) | 2026-11-30 → 2027-05-11 (+162d) |  |  |  |
| RHD4CZ5L08PT5100 | Pipe Encasement for Potable Pipelines - (RD-L-8)-Z5-L08-PT | 2026-11-29 → 2027-05-10 (+162d) | 2026-11-30 → 2027-05-11 (+162d) |  |  |  |
| 4403 | **RHD4-02-002-Z5-L08-Irrigation Network - IRR** | 2026-11-25 → 2027-05-06 (+162d) | 2027-01-04 → 2027-06-20 (+167d) |  |  |  |
| 4404 | **RHD4-02-002-L08-(IRR)-HDPE Pipes - 160 mm diameter** | 2026-12-17 → 2027-06-02 (+167d) | 2026-12-28 → 2027-06-13 (+167d) |  |  |  |
| RHD4CZ5L08IRR1100 | Excavation works for HDPE Pipline 160 mm - (RD-L-8)-Z5-L08-IRR | 2026-12-17 → 2027-06-02 (+167d) | 2026-12-19 → 2027-06-03 (+166d) |  |  |  |
| RHD4CZ5L08IRR1200 | Bedding works for HDPE Pipline 160 mm - (RD-L-8)-Z5-L08-IRR | 2026-12-20 → 2027-06-05 (+167d) | 2026-12-21 → 2027-06-06 (+167d) |  |  |  |
| RHD4CZ5L08IRR1300 | Installing for HDPE Pipline 160 mm - (RD-L-8)-Z5-L08-IRR | 2026-12-22 → 2027-06-07 (+167d) | 2026-12-23 → 2027-06-08 (+167d) |  |  |  |
| RHD4CZ5L08IRR1400 | Primary Test for HDPE Pipline 160 mm - (RD-L-8)-Z5-L08-IRR | 2026-12-24 → 2027-06-09 (+167d) | 2026-12-26 → 2027-06-10 (+166d) |  |  |  |
| RHD4CZ5L08IRR1500 | Backfilling and warning tape works for HDPE Pipline 160 mm - (RD-L-8)-Z5-L08-IRR | 2026-12-27 → 2027-06-12 (+167d) | 2026-12-28 → 2027-06-13 (+167d) |  |  |  |
| 4412 | **RHD4-02-002-L08-(IRR)-Gate Valves (Direct Buried)** | 2026-12-22 → 2027-06-07 (+167d) | 2026-12-30 → 2027-06-15 (+167d) |  |  |  |
| RHD4CZ5L08IRR3100 | Installation for Direct Buried Gate Valves - (RD-L-8)-Z5-L08-IRR | 2026-12-22 → 2027-06-07 (+167d) | 2026-12-23 → 2027-06-08 (+167d) |  |  |  |
| RHD4CZ5L08IRR3200 | Stem and Service box for Direct Buried Gate Valves - (RD-L-8)-Z5-L08-IRR | 2026-12-29 → 2027-06-14 (+167d) | 2026-12-30 → 2027-06-15 (+167d) |  |  |  |
| 6685 | **RHD4-02-002-L08-(IRR)-Wash out Chamber** | 2026-12-24 → 2027-06-09 (+167d) | 2027-01-02 → 2027-06-17 (+166d) |  |  |  |
| RHD4CZ5L08IRR2101 | Excavation and Bedding for Wash out Chamber for Irrigation Network - (RD-L-8)-Z5-L08-IRR | 2026-12-24 → 2027-06-09 (+167d) | 2026-12-26 → 2027-06-10 (+166d) |  |  |  |
| RHD4CZ5L08IRR2201 | PC works for Wash out Chamber for Irrigation Network - (RD-L-8)-Z5-L08-IRR | 2026-12-27 → 2027-06-12 (+167d) | 2026-12-28 → 2027-06-13 (+167d) |  |  |  |
| RHD4CZ5L08IRR2301 | Installation for Wash out Chamber for Irrigation Network - (RD-L-8)-Z5-L08-IRR | 2026-12-29 → 2027-06-14 (+167d) | 2026-12-30 → 2027-06-15 (+167d) |  |  |  |
| RHD4CZ5L08IRR2401 | Backfilling works for Wash out Chamber for Irrigation Network - (RD-L-8)-Z5-L08-IRR | 2026-12-31 → 2027-06-16 (+167d) | 2027-01-02 → 2027-06-17 (+166d) |  |  |  |
| 6686 | **RHD4-02-002-L08-(IRR)-Wash out Valves** | 2026-12-31 → 2027-06-16 (+167d) | 2027-01-04 → 2027-06-20 (+167d) |  |  |  |
| RHD4CZ5L08IRR3102 | Installation for Wash out Valve for Irrigation Network - (RD-L-8)-Z5-L08-IRR | 2026-12-31 → 2027-06-16 (+167d) | 2027-01-02 → 2027-06-17 (+166d) |  |  |  |
| RHD4CZ5L08IRR3202 | Stem and Service box for Wash out Valve for Irrigation Network - (RD-L-8)-Z5-L08-IRR | 2027-01-03 → 2027-06-19 (+167d) | 2027-01-04 → 2027-06-20 (+167d) |  |  |  |
| 4406 | **RHD4-02-002-L08-(IRR)-HDPE Pipes - 200 mm diameter** | 2026-11-25 → 2027-05-06 (+162d) | 2026-12-30 → 2027-06-15 (+167d) |  |  |  |
| RHD4CZ5L08IRR1102 | Excavation works for HDPE Pipline 200 mm - (RD-L-8)-Z5-L08-IRR | 2026-11-25 → 2027-05-06 (+162d) | 2026-11-30 → 2027-05-11 (+162d) |  |  |  |
| RHD4CZ5L08IRR1202 | Bedding works for HDPE Pipline 200 mm - (RD-L-8)-Z5-L08-IRR | 2026-12-01 → 2027-05-12 (+162d) | 2026-12-05 → 2027-05-20 (+166d) |  |  | resources Skilled labor [39.21 h]; Unskilled Labor [78.52 h]; Equipment Opreator [78.52 h]; Excavator-Poclain [39.21 h]; Dump Truck [39.21 h]; HDPE (200mm Diameter) - TSE - Depth: less than 1.5m [32.12 m]; HDPE (200mm Diameter) - TSE - Depth: more than 1.51m [2.94 m] → Skilled labor [39.2 h]; Unskilled Labor [78.52 h]; Equipment Opreator [78.52 h]; Excavator-Poclain [39.2 h]; Dump Truck [39.2 h]; HDPE (200mm Diameter) - TSE - Depth: less than 1.5m [32.12 m]; HDPE (200mm Diameter) - TSE - Depth: more than 1.51m [2.94 m] |
| RHD4CZ5L08IRR1302 | Installing for HDPE Pipline 200 mm - (RD-L-8)-Z5-L08-IRR | 2026-12-06 → 2027-05-22 (+167d) | 2026-12-10 → 2027-05-26 (+167d) |  |  |  |
| RHD4CZ5L08IRR1402 | Primary Test for HDPE Pipline 200 mm - (RD-L-8)-Z5-L08-IRR | 2026-12-24 → 2027-06-09 (+167d) | 2026-12-26 → 2027-06-10 (+166d) |  |  |  |
| RHD4CZ5L08IRR1502 | Backfilling and warning tape works for HDPE Pipline 200 mm - (RD-L-8)-Z5-L08-IRR | 2026-12-27 → 2027-06-12 (+167d) | 2026-12-30 → 2027-06-15 (+167d) |  |  | resources Skilled labor [39.21 h]; Unskilled Labor [78.52 h]; Equipment Opreator [78.52 h]; Excavator-Poclain [39.21 h]; Dump Truck [39.21 h]; HDPE (200mm Diameter) - TSE - Depth: less than 1.5m [128.5 m]; HDPE (200mm Diameter) - TSE - Depth: more than 1.51m [11.77 m] → Skilled labor [39.2 h]; Unskilled Labor [78.52 h]; Equipment Opreator [78.52 h]; Excavator-Poclain [39.2 h]; Dump Truck [39.2 h]; HDPE (200mm Diameter) - TSE - Depth: less than 1.5m [128.5 m]; HDPE (200mm Diameter) - TSE - Depth: more than 1.51m [11.77 m] |
| 4437 | **RHD4-02-002-Z5-L08-Medium Voltage Network - MV** | 2027-01-31 → 2027-07-31 (+181d) | 2027-04-15 → 2027-10-11 (+179d) |  |  |  |
| 4438 | **RHD4-02-002-L08-(MV)-Medium Voltage cable trench** | 2027-01-31 → 2027-07-31 (+181d) | 2027-04-06 → 2027-10-02 (+179d) |  |  |  |
| RHD4CZ5L08MV1100 | Excavation for Medium Voltage Trench - (RD-L-8)-Z5-L08-MV | 2027-01-31 → 2027-07-31 (+181d) | 2027-02-16 → 2027-08-16 (+181d) |  |  |  |
| RHD4CZ5L08MV1200 | Trench Backfilling for Medium Voltage Network - (RD-L-8)-Z5-L08-MV | 2027-03-22 → 2027-09-14 (+176d) | 2027-04-06 → 2027-10-02 (+179d) | 14d → 15d |  |  |
| 4439 | **RHD4-02-002-L08-(MV)-Medium Voltage duct banks** | 2027-04-07 → 2027-10-03 (+179d) | 2027-04-15 → 2027-10-11 (+179d) |  |  |  |
| RHD4CZ5L08MV2100 | Excavation of Duct Banks for Medium Voltage Network - (RD-L-8)-Z5-L08-MV | 2027-04-07 → 2027-10-03 (+179d) | 2027-04-08 → 2027-10-04 (+179d) |  |  | resources Unskilled Labor [11.22 h]; Equipment Opreator [22.54 h]; Excavator-Poclain [11.22 h]; Dump Truck [11.22 h]; Duct bank for MV cables UPVC (4xø150mm) [1.55 m] → Unskilled Labor [11.2 h]; Equipment Opreator [22.54 h]; Excavator-Poclain [11.2 h]; Dump Truck [11.2 h]; Duct bank for MV cables UPVC (4xø150mm) [1.55 m] |
| RHD4CZ5L08MV2200 | Installation of Duct Banks for Medium Voltage Network - (RD-L-8)-Z5-L08-MV | 2027-04-10 → 2027-10-05 (+178d) | 2027-04-11 → 2027-10-06 (+178d) |  |  |  |
| RHD4CZ5L08MV2300 | Pouring of Duct Banks for Medium Voltage Network - (RD-L-8)-Z5-L08-MV | 2027-04-12 → 2027-10-07 (+178d) | 2027-04-13 → 2027-10-09 (+179d) |  |  | resources Unskilled Labor [11.22 h]; Equipment Opreator [22.54 h]; Excavator-Poclain [11.22 h]; Dump Truck [11.22 h]; Duct bank for MV cables UPVC (4xø150mm) [10.09 m] → Unskilled Labor [11.2 h]; Equipment Opreator [22.54 h]; Excavator-Poclain [11.2 h]; Dump Truck [11.2 h]; Duct bank for MV cables UPVC (4xø150mm) [10.09 m] |
| RHD4CZ5L08MV2400 | Backfilling of Duct Banks for Medium Voltage Network - (RD-L-8)-Z5-L08-MV | 2027-04-14 → 2027-10-10 (+179d) | 2027-04-15 → 2027-10-11 (+179d) |  |  |  |
| 4440 | **RHD4-02-002-L08-(MV)-Medium Voltage cables 3Cx 500 mm²** | 2027-02-17 → 2027-08-17 (+181d) | 2027-03-23 → 2027-09-15 (+176d) |  |  |  |

| ID | Task | Start | Finish | Duration | Complete | Other |
| --- | --- | --- | --- | --- | --- | --- |
| RHD4CZ5L08MV3100 | Installation of Medium Voltage Cables 3Cx 500 mm² - (RD-L-8)-Z5-L08-MV | 2027-02-17 → 2027-08-17 (+181d) | 2027-03-08 → 2027-09-04 (+180d) |  |  |  |
| RHD4CZ5L08MV3200 | Joints Installation of Medium Voltage Cables 3Cx 500 mm² - (RD-L-8)-Z5-L08-MV | 2027-03-13 → 2027-09-05 (+176d) | 2027-03-15 → 2027-09-07 (+176d) |  |  | resources Skilled labor [27.23 h]; Unskilled Labor [108.9 h]; Electrician [54.45 h]; Equipment Opreator [27.23 h]; Boom Truck [27.23 h]; Straight joints cables for 13.8 kv 3Cx 500 mm², Al /XLPE/LLDPE [5 Unit] → Skilled labor [27.2 h]; Unskilled Labor [108.9 h]; Electrician [54.45 h]; Equipment Opreator [27.2 h]; Boom Truck [27.2 h]; Straight joints cables for 13.8 kv 3Cx 500 mm², Al /XLPE/LLDPE [5 Unit] |
| RHD4CZ5L08MV3300 | Testing of Medium Voltage Cables 3Cx 500 mm² - (RD-L-8)-Z5-L08-MV | 2027-03-16 → 2027-09-08 (+176d) | 2027-03-21 → 2027-09-13 (+176d) |  |  |  |
| RHD4CZ5L08MV3400 | Termination of Medium Voltage Cables 3Cx 500 mm² - (RD-L-8)-Z5-L08-MV | 2027-03-22 → 2027-09-14 (+176d) | 2027-03-23 → 2027-09-15 (+176d) |  |  |  |
| 4441 | **RHD4-02-002-L08-(MV)-Medium Voltage cables 3Cx 50 mm²** | 2027-03-24 → 2027-09-16 (+176d) | 2027-03-25 → 2027-09-18 (+177d) |  |  |  |
| RHD4CZ5L08MV3401 | Termination of Medium Voltage Cables 3Cx 50 mm² - (RD-L-8)-Z5-L08-MV | 2027-03-24 → 2027-09-16 (+176d) | 2027-03-25 → 2027-09-18 (+177d) |  |  |  |
| 4442 | **RHD4-02-002-L08-(MV)-Normally open Point (Outdoor Type)** | 2027-03-07 → 2027-09-02 (+179d) | 2027-03-14 → 2027-09-06 (+176d) |  |  |  |
| RHD4CZ5L08MV4100 | Installation for Normally open Point - (RD-L-8)-Z5-L08-MV | 2027-03-07 → 2027-09-02 (+179d) | 2027-03-08 → 2027-09-04 (+180d) |  |  |  |
| RHD4CZ5L08MV4200 | Termination for Normally open Point - (RD-L-8)-Z5-L08-MV | 2027-03-13 → 2027-09-05 (+176d) | 2027-03-14 → 2027-09-06 (+176d) |  |  |  |
| 4444 | **RHD4-02-002-Z5-L08-Low Voltage Network - LV** | 2027-01-05 → 2027-06-21 (+167d) | 2027-01-18 → 2027-07-04 (+167d) |  |  |  |
| 4447 | **RHD4-02-002-L08-(LV)-Low Voltage cables** | 2027-01-05 → 2027-06-21 (+167d) | 2027-01-18 → 2027-07-04 (+167d) |  |  |  |
| RHD4CZ5L08LV3100 | Excavation for Low Voltage Cables for Low Voltage Network - (RD-L-8)-Z5-L08-LV | 2027-01-05 → 2027-06-21 (+167d) | 2027-01-09 → 2027-06-24 (+166d) |  |  |  |
| RHD4CZ5L08LV3200 | Cable Laying of Low Voltage Cables for Low Voltage Network - (RD-L-8)-Z5-L08-LV | 2027-01-10 → 2027-06-26 (+167d) | 2027-01-12 → 2027-06-28 (+167d) |  |  | resources Skilled labor [29.62 h]; Unskilled Labor [118.49 h]; Electrician [59.24 h]; Equipment Opreator [88.87 h]; Boom Truck [29.62 h]; Cable Laying Machine [59.24 h]; Cable, Copper 4x185mm2/ CU/XLPE/PVC [93.32 m]; Cable, Copper 4x50mm2/ CU/XLPE/PVC +1x25mm2 CU/PVC [396.17 m] → Skilled labor [29.6 h]; Unskilled Labor [118.49 h]; Electrician [59.24 h]; Equipment Opreator [88.87 h]; Boom Truck [29.6 h]; Cable Laying Machine [59.24 h]; Cable, Copper 4x185mm2/ CU/XLPE/PVC [93.32 m]; Cable, Copper 4x50mm2/ CU/XLPE/PVC +1x25mm2 CU/PVC [396.17 m] |
| RHD4CZ5L08LV3300 | Warning tape and Backfill for Low Voltage Cables for Low Voltage Network - (RD-L-8)-Z5-L08-LV | 2027-01-13 → 2027-06-29 (+167d) | 2027-01-16 → 2027-07-01 (+166d) |  |  | resources Skilled labor [29.62 h]; Unskilled Labor [118.49 h]; Electrician [59.24 h]; Equipment Opreator [29.62 h]; Boom Truck [29.62 h]; Cable, Copper 4x185mm2/ CU/XLPE/PVC [23.33 m]; Cable, Copper 4x50mm2/ CU/XLPE/PVC +1x25mm2 CU/PVC [99.04 m] → Skilled labor [29.6 h]; Unskilled Labor [118.49 h]; Electrician [59.24 h]; Equipment Opreator [29.6 h]; Boom Truck [29.6 h]; Cable, Copper 4x185mm2/ CU/XLPE/PVC [23.33 m]; Cable, Copper 4x50mm2/ CU/XLPE/PVC +1x25mm2 CU/PVC [99.04 m] |
| RHD4CZ5L08LV3400 | Testing of Low Voltage Cables for Low Voltage Network - (RD-L-8)-Z5-L08-LV | 2027-01-17 → 2027-07-03 (+167d) | 2027-01-18 → 2027-07-04 (+167d) |  |  |  |
| 4259 | **RHD4-02-002-L08-(LV)-Low Voltage Distribution Pillars** | 2027-01-10 → 2027-06-26 (+167d) | 2027-01-16 → 2027-07-01 (+166d) |  |  |  |
| RHD4CZ5L08LV4100 | Leveling for Distribution Pillars for Low Voltage Network - (RD-L-8)-Z5-L08-LV | 2027-01-10 → 2027-06-26 (+167d) | 2027-01-11 → 2027-06-27 (+167d) |  |  |  |
| RHD4CZ5L08LV4200 | Lean Concrete for Distribution Pillars for Low Voltage Network - (RD-L-8)-Z5-L08-LV | 2027-01-12 → 2027-06-28 (+167d) | 2027-01-13 → 2027-06-29 (+167d) |  |  |  |
| RHD4CZ5L08LV4300 | Installation of Distribution Pillars for Low Voltage Network - (RD-L-8)-Z5-L08-LV | 2027-01-14 → 2027-06-30 (+167d) | 2027-01-16 → 2027-07-01 (+166d) |  |  |  |
| 4450 | **RHD4-02-002-Z5-L08-Street Lighting Network - SL** | 2027-01-10 → 2027-06-26 (+167d) | 2027-03-20 → 2027-08-29 (+162d) |  |  |  |
| 4451 | **RHD4-02-002-L08-(SL)-Street Lighting duct banks** | 2027-01-10 → 2027-06-26 (+167d) | 2027-01-18 → 2027-07-04 (+167d) |  |  |  |
| RHD4CZ5L08SL2100 | Excavation of Duct Banks for Street Lighting Network - (RD-L-8)-Z5-L08-SL | 2027-01-10 → 2027-06-26 (+167d) | 2027-01-11 → 2027-06-27 (+167d) |  |  |  |
| RHD4CZ5L08SL2200 | Installation of Duct Banks for Street Lighting Network - (RD-L-8)-Z5-L08-SL | 2027-01-12 → 2027-06-28 (+167d) | 2027-01-13 → 2027-06-29 (+167d) |  |  |  |
| RHD4CZ5L08SL2300 | Pouring of Duct Banks for Street Lighting Network - (RD-L-8)-Z5-L08-SL | 2027-01-14 → 2027-06-30 (+167d) | 2027-01-16 → 2027-07-01 (+166d) |  |  |  |
| RHD4CZ5L08SL2400 | Backfilling of Duct Banks for Street Lighting Network - (RD-L-8)-Z5-L08-SL | 2027-01-17 → 2027-07-03 (+167d) | 2027-01-18 → 2027-07-04 (+167d) |  |  |  |
| 4452 | **RHD4-02-002-L08-(SL)-Street Lighting Drawpit** | 2027-01-19 → 2027-07-05 (+167d) | 2027-01-23 → 2027-07-08 (+166d) |  |  |  |
| RHD4CZ5L08SL5100 | Excavation of Drawpit size 600x600x900mm for Street Lighting Network - (RD-L-8)-Z5-L08-SL | 2027-01-19 → 2027-07-05 (+167d) | 2027-01-20 → 2027-07-06 (+167d) |  |  | resources Skilled labor [1.85 h]; Unskilled Labor [1.85 h]; Equipment Opreator [1.42 h]; Excavator-Poclain [0.76 h]; Dump Truck [0.76 h]; Drawpit with medium duty steel cover, size600x600x900mm, [0.3 Unit] → Skilled labor [1.85 h]; Unskilled Labor [1.85 h]; Equipment Opreator [1.42 h]; Excavator-Poclain [0.8 h]; Dump Truck [0.8 h]; Drawpit with medium duty steel cover, size600x600x900mm, [0.3 Unit] |
| RHD4CZ5L08SL5200 | Installation of Drawpit size 600x600x900mm for Street Lighting Network - (RD-L-8)-Z5-L08-SL | 2027-01-21 → 2027-07-07 (+167d) | 2027-01-23 → 2027-07-08 (+166d) |  |  | resources Skilled labor [1.85 h]; Unskilled Labor [1.85 h]; Equipment Opreator [0.76 h]; Boom Truck [0.76 h]; Drawpit with medium duty steel cover, size600x600x900mm, [1.7 Unit] → Skilled labor [1.85 h]; Unskilled Labor [1.85 h]; Equipment Opreator [0.8 h]; Boom Truck [0.8 h]; Drawpit with medium duty steel cover, size600x600x900mm, [1.7 Unit] |
| 4453 | **RHD4-02-002-L08-(SL)-Street Lighting cables** | 2027-01-24 → 2027-07-10 (+167d) | 2027-02-18 → 2027-08-04 (+167d) |  |  |  |
| RHD4CZ5L08SL3100 | Excavation for Street Lighting Cables for Street Lighting Network - (RD-L-8)-Z5-L08-SL | 2027-01-24 → 2027-07-10 (+167d) | 2027-01-31 → 2027-07-17 (+167d) |  |  |  |
| RHD4CZ5L08SL3200 | Cable Laying of Street Lighting Cables for Street Lighting Network - (RD-L-8)-Z5-L08-SL | 2027-02-01 → 2027-07-18 (+167d) | 2027-02-07 → 2027-07-24 (+167d) |  |  | resources Skilled labor [56.52 h]; Unskilled Labor [226.08 h]; Electrician [113.04 h]; Equipment Opreator [169.56 h]; Boom Truck [56.52 h]; Cable Laying Machine [113.04 h]; Cable, Copper 4x10mm2/ CU/XLPE/SWA/PVC + 1x10mm2 CU/PVC [934.39 m] → Skilled labor [56.52 h]; Unskilled Labor [226.08 h]; Electrician [113.04 h]; Equipment Opreator [169.6 h]; Boom Truck [56.52 h]; Cable Laying Machine [113.04 h]; Cable, Copper 4x10mm2/ CU/XLPE/SWA/PVC + 1x10mm2 CU/PVC [934.39 m] |
| RHD4CZ5L08SL3300 | Warning tape and Backfill for Street Lighting Cables for Street Lighting Network - (RD-L-8)-Z5-L08-SL | 2027-02-08 → 2027-07-25 (+167d) | 2027-02-14 → 2027-07-31 (+167d) |  |  |  |
| RHD4CZ5L08SL3400 | Testing of Street Lighting Cables for Street Lighting Network - (RD-L-8)-Z5-L08-SL | 2027-02-15 → 2027-08-01 (+167d) | 2027-02-18 → 2027-08-04 (+167d) |  |  |  |
| 4454 | **RHD4-02-002-L08-(SL)-Street Lighting Poles** | 2027-02-20 → 2027-08-05 (+166d) | 2027-03-20 → 2027-08-29 (+162d) |  |  |  |
| RHD4CZ5L08SL1100 | Excavation for RC Base for Lighting Poles for Street Lighting Network - (RD-L-8)-Z5-L08-SL | 2027-02-20 → 2027-08-05 (+166d) | 2027-02-24 → 2027-08-09 (+166d) |  |  |  |
| RHD4CZ5L08SL1200 | Installation for RC Base for Lighting Poles for Street Lighting Network - (RD-L-8)-Z5-L08-SL | 2027-02-25 → 2027-08-10 (+166d) | 2027-03-01 → 2027-08-14 (+166d) |  |  |  |
| RHD4CZ5L08SL1300 | Backfill for RC Base for Lighting Poles for Street Lighting Network - (RD-L-8)-Z5-L08-SL | 2027-03-02 → 2027-08-15 (+166d) | 2027-03-06 → 2027-08-18 (+165d) |  |  |  |
| RHD4CZ5L08SL1400 | Installation for Lighting Poles for Street Lighting Network - (RD-L-8)-Z5-L08-SL | 2027-03-07 → 2027-08-19 (+165d) | 2027-03-15 → 2027-08-24 (+162d) |  |  |  |
| RHD4CZ5L08SL1500 | Luminaire Installation for Lighting Poles for Street Lighting Network - (RD-L-8)-Z5-L08-SL | 2027-03-16 → 2027-08-25 (+162d) | 2027-03-20 → 2027-08-29 (+162d) |  |  |  |
| 4462 | **RHD4-02-002-Z5-L08-Telecommunications Network - TC** | 2026-08-01 → 2027-01-30 (+182d) | 2027-04-26 → 2027-10-06 (+163d) |  |  |  |
| 4463 | **RHD4-02-002-L08-(TC)-Telecommunications Ducts** | 2027-03-21 → 2027-08-30 (+162d) | 2027-04-26 → 2027-10-06 (+163d) |  |  |  |
| RHD4CZ5L08TC2100 | Excavation of HDPE Ducts for Telecom Network - (RD-L-8)-Z5-L08-TC | 2027-03-21 → 2027-08-30 (+162d) | 2027-03-30 → 2027-09-08 (+162d) |  |  |  |
| RHD4CZ5L08TC2200 | Installation of HDPE Ducts for Telecom Network - (RD-L-8)-Z5-L08-TC | 2027-03-31 → 2027-09-09 (+162d) | 2027-04-15 → 2027-09-26 (+164d) |  |  |  |
| RHD4CZ5L08TC2400 | Backfilling of HDPE Ducts for Telecom Network - (RD-L-8)-Z5-L08-TC | 2027-04-17 → 2027-09-27 (+163d) | 2027-04-26 → 2027-10-06 (+163d) |  |  |  |
| 4464 | **RHD4-02-002-L08-(TC)-Telecommunications Manholes** | 2027-03-31 → 2027-09-09 (+162d) | 2027-04-11 → 2027-09-20 (+162d) |  |  |  |
| RHD4CZ5L08TC5100 | Excavation for Manholes for Telecom Network - (RD-L-8)-Z5-L08-TC | 2027-03-31 → 2027-09-09 (+162d) | 2027-04-05 → 2027-09-14 (+162d) |  |  |  |
| RHD4CZ5L08TC5200 | Installation of Manholes for Telecom Network - (RD-L-8)-Z5-L08-TC | 2027-04-06 → 2027-09-15 (+162d) | 2027-04-11 → 2027-09-20 (+162d) |  |  |  |
| 4465 | **RHD4-02-002-L08-(TC)-Telecomminications Road Crossings** | 2026-08-01 → 2027-01-30 (+182d) | 2026-08-09 → 2027-02-11 (+186d) |  |  |  |
| RHD4CZ5L08TC3100 | Excavation for Road Crossings for Telecom Network - (RD-L-8)-Z5-L08-TC | 2026-08-01 → 2027-01-30 (+182d) | 2026-08-02 → 2027-01-31 (+182d) |  |  |  |
| RHD4CZ5L08TC3200 | Installation of Road Crossings for Telecom Network - (RD-L-8)-Z5-L08-TC | 2026-08-03 → 2027-02-01 (+182d) | 2026-08-04 → 2027-02-02 (+182d) |  |  |  |
| RHD4CZ5L08TC3300 | Pouring of Road Crossings for Telecom Network - (RD-L-8)-Z5-L08-TC | 2026-08-05 → 2027-02-03 (+182d) | 2026-08-06 → 2027-02-04 (+182d) |  |  |  |
| RHD4CZ5L08TC3400 | Backfilling of Road Crossings for Telecom Network - (RD-L-8)-Z5-L08-TC | 2026-08-08 → 2027-02-10 (+186d) | 2026-08-09 → 2027-02-11 (+186d) |  |  |  |
| 4466 | **RHD4-02-002-Z5-L08-Information and Communication Technologies - ICT** | 2027-04-27 → 2027-10-07 (+163d) | 2027-06-03 → 2027-11-15 (+165d) |  |  |  |
| 4467 | **RHD4-02-002-L08-(ICT)-Information and Communication Technologies Ducts** | 2027-04-27 → 2027-10-07 (+163d) | 2027-06-03 → 2027-11-15 (+165d) |  |  |  |
| RHD4CZ5L08ICT2100 | Excavation of HDPE Ducts for ICT Network - (RD-L-8)-Z5-L08-ICT | 2027-04-27 → 2027-10-07 (+163d) | 2027-05-08 → 2027-10-18 (+163d) |  |  |  |
| RHD4CZ5L08ICT2200 | Installation of HDPE Ducts for ICT Network - (RD-L-8)-Z5-L08-ICT | 2027-05-09 → 2027-10-19 (+163d) | 2027-05-23 → 2027-11-03 (+164d) | 9d → 14d |  |  |
| RHD4CZ5L08ICT2400 | Backfilling of HDPE Ducts for ICT Network - (RD-L-8)-Z5-L08-ICT | 2027-05-24 → 2027-11-04 (+164d) | 2027-06-03 → 2027-11-15 (+165d) |  |  |  |
| 4468 | **RHD4-02-002-L08-(ICT)-Information and Communication Technologies Manholes** | 2027-05-09 → 2027-10-19 (+163d) | 2027-05-23 → 2027-10-30 (+160d) |  |  |  |
| RHD4CZ5L08ICT5100 | Excavation for Manholes for ICT Network - (RD-L-8)-Z5-L08-ICT | 2027-05-09 → 2027-10-19 (+163d) | 2027-05-12 → 2027-10-24 (+165d) | 4d → 5d |  |  |
| RHD4CZ5L08ICT5200 | Installation of Manholes for ICT Network - (RD-L-8)-Z5-L08-ICT | 2027-05-13 → 2027-10-25 (+165d) | 2027-05-23 → 2027-10-30 (+160d) |  |  |  |
| 3731 | **RHD4-02-002-Z5-L016** | 2026-06-13 → 2026-06-03 (-10d) | 2027-09-13 → 2028-03-18 (+187d) |  |  |  |
| 3910 | **RHD4-02-002-Z5-L016-Road Works - RD** | 2026-08-24 → 2026-06-03 (-82d) | 2027-09-13 → 2028-03-18 (+187d) |  |  |  |
| 3911 | **RHD4-02-002-L016-(RD)-Subgrade** | 2026-08-24 → 2026-06-03 (-82d) | 2026-08-31 → 2026-08-03 (-28d) |  |  |  |
| RHD4CZ5L016RD1100 | Supply, lay and compaction subgrade compacted thickness 300 mm for Roads - (RD-L-16)-Z5-L016-RD(Completed) | 2026-08-24 → 2026-06-03 A (-82d) | 2026-08-31 → 2026-08-03 A (-28d) |  | 0% → 100% |  |
| 3912 | **RHD4-02-002-L016-(RD)-Aggregate Base Course** | 2026-09-01 → 2027-02-28 (+180d) | 2026-09-06 → 2027-03-04 (+179d) |  |  |  |
| RHD4CZ5L016RD2100 | Supply, lay and compaction Aggregate base course compacted thickness 300 mmfor Roads - (RD-L-16)-Z5-L016-RD | 2026-09-01 → 2027-02-28 (+180d) | 2026-09-06 → 2027-03-04 (+179d) |  |  |  |
| 3913 | **RHD4-02-002-L016-(RD)-Bituminous base course Two Layers, including (MC1)&(RC2)** | 2026-09-07 → 2027-03-06 (+180d) | 2027-08-22 → 2028-02-12 (+174d) |  |  |  |
| RHD4CZ5L016RD3100 | Supply, lay and Asphaltic base course including Prime Coat (MC1) for 1st Layer - (RD-L-16)-Z5-L016-RD | 2026-09-07 → 2027-03-06 (+180d) | 2026-09-08 → 2027-03-07 (+180d) |  |  |  |
| RHD4CZ5L016RD3200 | Supply, lay and Asphaltic base course including Tack Coat (RC2) for 2nd Layer - (RD-L-16)-Z5-L016-RD | 2027-08-21 → 2028-02-10 (+173d) | 2027-08-22 → 2028-02-12 (+174d) |  |  |  |
| 3915 | **RHD4-02-002-L016-(RD)-Precast Concrete Curb** | 2027-08-23 → 2028-02-13 (+174d) | 2027-08-26 → 2028-02-17 (+175d) |  |  |  |

| ID | Task | Start | Finish | Duration | Complete | Other |
| --- | --- | --- | --- | --- | --- | --- |
| RHD4CZ5L016RD5100 | Supply and installation Precast Concrete Kerb for Roads - (RD-L-16)-Z5-L016-RD | 2027-08-23 → 2028-02-13 (+174d) | 2027-08-26 → 2028-02-17 (+175d) | 4d → 5d |  |  |
| 3918 | **RHD4-02-002-L016-(RD)-Traffic Signage** | 2027-08-28 → 2028-02-19 (+175d) | 2027-08-31 → 2028-02-26 (+179d) |  |  |  |
| RHD4CZ5L016RD8100 | Installation of Traffic Signage for Road Network - (RD-L-16)-Z5-L016-RD | 2027-08-28 → 2028-02-19 (+175d) | 2027-08-31 → 2028-02-26 (+179d) | 4d → 6d |  |  |
| 3916 | **RHD4-02-002-L016-(RD)-Precast Interlocking Block Pavers** | 2027-09-01 → 2028-03-01 (+182d) | 2027-09-05 → 2028-03-07 (+184d) |  |  |  |
| RHD4CZ5L016RD6100 | Interlocking block pavers for sidewalk-footpath for Side walks and Parking areas - (RD-L-16)-Z5-L016-RD | 2027-09-01 → 2028-03-01 (+182d) | 2027-09-05 → 2028-03-07 (+184d) | 4d → 6d |  |  |
| 3914 | **RHD4-02-002-L016-(RD)-Bituminous concrete wearing course including tack coat (RC2)** | 2027-09-06 → 2028-03-08 (+184d) | 2027-09-07 → 2028-03-09 (+184d) |  |  |  |
| RHD4CZ5L016RD4100 | Supply, lay and compaction Asphaltic wearing course including tack Coat (RC2)for Road Network - (RD-L-16)-Z5-L016-RD | 2027-09-06 → 2028-03-08 (+184d) | 2027-09-07 → 2028-03-09 (+184d) |  |  | resources Skilled labor [9.69 h]; Unskilled Labor [58.37 h]; Equipment Opreator [145.82 h]; Bobcat [9.69 h]; Roller compactor [9.69 h]; Asphalt Paver [9.69 h]; Rubber Compactor [19.49 h]; MC1/RC2 Sprinkler [9.69 h]; Dump Truck [87.45 h]; Bituminous concrete wearing course, (Grading I - Class A), including tack coat (RC2) [463.7 m3] → Skilled labor [9.69 h]; Unskilled Labor [58.4 h]; Equipment Opreator [145.82 h]; Bobcat [9.69 h]; Roller compactor [9.69 h]; Asphalt Paver [9.69 h]; Rubber Compactor [19.49 h]; MC1/RC2 Sprinkler [9.69 h]; Dump Truck [87.45 h]; Bituminous concrete wearing course, (Grading I - Class A), including tack coat (RC2) [463.7 m3] |
| 3917 | **RHD4-02-002-L016-(RD)-Pavement Marking** | 2027-09-08 → 2028-03-11 (+185d) | 2027-09-13 → 2028-03-18 (+187d) |  |  |  |
| RHD4CZ5L016RD7100 | Pavement Markings for Road Network - (RD-L-16)-Z5-L016-RD | 2027-09-08 → 2028-03-11 (+185d) | 2027-09-13 → 2028-03-18 (+187d) | 5d → 7d |  |  |
| 3735 | **RHD4-02-002-Z5-L016-Storm Network - ST** |  | 2026-08-22 → 2027-02-14 (+176d) |  |  |  |
| 3754 | **RHD4-02-002-L016-(ST)-MH Works - 2000 mm diameter** | 2026-07-28 → 2026-08-04 (+7d) | 2026-08-08 → 2027-02-09 (+185d) |  |  |  |
| RHD4CZ5L016ST3102 | Excavation and PC Blinding works for MH 2000 mm - (RD-L-16)-Z5-L016-ST | 2026-07-28 → 2026-08-04 A (+7d) | 2026-07-29 → 2027-01-31 (+186d) |  | 0% → 34% |  |
| RHD4CZ5L016ST3202 | Installation of Base for MH 2000 mm - (RD-L-16)-Z5-L016-ST | 2026-07-30 → 2027-02-01 (+186d) | 2026-08-01 → 2027-02-02 (+185d) |  |  |  |
| RHD4CZ5L016ST3302 | MH Ring and C.Slab works and Backfilling works for MH 2000 mm - (RD-L-16)-Z5-L016-ST | 2026-08-02 → 2027-02-03 (+185d) | 2026-08-03 → 2027-02-04 (+185d) |  |  |  |
| RHD4CZ5L016ST3402 | Steel Cover for MH 2000 mm - (RD-L-16)-Z5-L016-ST | 2026-08-04 → 2027-02-06 (+186d) | 2026-08-05 → 2027-02-07 (+186d) |  |  |  |
| RHD4CZ5L016ST3502 | Finishing, Benching, Testing works for MH 2000 mm - (RD-L-16)-Z5-L016-ST | 2026-08-06 → 2027-02-08 (+186d) | 2026-08-08 → 2027-02-09 (+185d) |  |  |  |
| 1852 | **RHD4-02-002-L016-(ST)-GRP Pipes - 1200 mm diameter** | 2026-07-30 → 2026-09-29 (+61d) | 2026-08-10 → 2027-02-07 (+181d) |  |  |  |
| RHD4CZ5L016ST1108 | Excavation works for GRP Pipe Line 1200 mm - (RD-L-16)-Z5-L016-ST | 2026-07-30 → 2026-09-29 A (+61d) | 2026-08-01 → 2026-09-30 A (+60d) |  | 0% → 100% |  |
| RHD4CZ5L016ST1208 | Bedding works for GRP Pipe Line 1200 mm - (RD-L-16)-Z5-L016-ST | 2026-08-02 → 2026-09-30 A (+59d) | 2026-08-03 → 2026-10-01 A (+59d) |  | 0% → 100% |  |
| RHD4CZ5L016ST1308 | Installing for GRP Pipe Line 1200 mm - (RD-L-16)-Z5-L016-ST | 2026-08-04 → 2027-02-01 (+181d) | 2026-08-05 → 2027-02-02 (+181d) |  |  |  |
| RHD4CZ5L016ST1408 | Primary Test for GRP Pipe Line 1200 mm - (RD-L-16)-Z5-L016-ST | 2026-08-06 → 2027-02-03 (+181d) | 2026-08-08 → 2027-02-04 (+180d) |  |  |  |
| RHD4CZ5L016ST1508 | Backfilling and warning tape works for GRP Pipe Line 1200 mm - (RD-L-16)-Z5-L016-ST | 2026-08-09 → 2027-02-06 (+181d) | 2026-08-10 → 2027-02-07 (+181d) |  |  |  |
| 1844 | **RHD4-02-002-L016-(ST)-GRP Pipes - 400 mm diameter** | 2026-08-06 → 2026-08-04 (-2d) | 2026-08-17 → 2027-02-04 (+171d) |  |  |  |
| RHD4CZ5L016ST1100 | Excavation works for GRP Pipe Line 400 mm - (RD-L-16)-Z5-L016-ST | 2026-08-06 → 2026-08-04 A (-2d) | 2026-08-08 → 2026-08-05 A (-3d) |  | 0% → 100% |  |
| RHD4CZ5L016ST1200 | Bedding works for GRP Pipe Line 400 mm - (RD-L-16)-Z5-L016-ST | 2026-08-09 → 2026-08-06 A (-3d) | 2026-08-10 → 2026-08-08 A (-2d) |  | 0% → 100% |  |
| RHD4CZ5L016ST1300 | Installing for GRP Pipe Line 400 mm - (RD-L-16)-Z5-L016-ST | 2026-08-11 → 2026-08-09 A (-2d) | 2026-08-12 → 2026-08-10 A (-2d) |  | 0% → 100% |  |
| RHD4CZ5L016ST1500 | Backfilling and warning tape works for GRP Pipe Line 400 mm - (RD-L-16)-Z5-L016-ST | 2026-08-16 A | 2026-08-17 → 2026-09-20 A (+34d) |  | 0% → 100% |  |
| RHD4CZ5L016ST1400 | Primary Test for GRP Pipe Line 400 mm - (RD-L-16)-Z5-L016-ST | 2026-08-13 → 2027-02-03 (+174d) | 2026-08-15 → 2027-02-04 (+173d) |  |  |  |
| 1848 | **RHD4-02-002-L016-(ST)-GRP Pipes - 800 mm diameter** |  | 2026-08-15 → 2027-02-02 (+171d) |  |  |  |
| RHD4CZ5L016ST1104 | Excavation works for GRP Pipe Line 800 mm - (RD-L-16)-Z5-L016-ST | 2026-08-04 A | 2026-08-05 A |  | 0% → 100% | resources Skilled labor [3.92 h]; Unskilled Labor [3.92 h]; Equipment Opreator [4.79 h]; Excavator-Poclain [3.92 h]; Dump Truck [0.76 h]; GRP (800mm Diameter) - ST - Depth: 1.51m - 2.5m [10.93 m] → Skilled labor [3.92 h]; Unskilled Labor [3.92 h]; Equipment Opreator [4.8 h]; Excavator-Poclain [3.92 h]; Dump Truck [0.8 h]; GRP (800mm Diameter) - ST - Depth: 1.51m - 2.5m [10.93 m] |
| RHD4CZ5L016ST1204 | Bedding works for GRP Pipe Line 800 mm - (RD-L-16)-Z5-L016-ST | 2026-08-06 A | 2026-08-08 A |  | 0% → 100% |  |
| RHD4CZ5L016ST1304 | Installing for GRP Pipe Line 800 mm - (RD-L-16)-Z5-L016-ST | 2026-08-09 A | 2026-08-10 A |  | 0% → 100% |  |
| RHD4CZ5L016ST1504 | Backfilling and warning tape works for GRP Pipe Line 800 mm - (RD-L-16)-Z5-L016-ST | 2026-08-13 A | 2026-08-15 → 2026-09-20 A (+36d) |  | 0% → 100% |  |
| RHD4CZ5L016ST1404 | Primary Test for GRP Pipe Line 800 mm - (RD-L-16)-Z5-L016-ST | 2026-08-11 → 2027-02-01 (+174d) | 2026-08-12 → 2027-02-02 (+174d) |  |  |  |
| 2039 | **RHD4-02-002-L016-(ST)-GRP Pipes - 1000 mm diameter** |  | 2026-08-12 → 2027-02-09 (+181d) |  |  |  |
| RHD4CZ5L016ST1106 | Excavation works for GRP Pipe Line 1000 mm - (RD-L-16)-Z5-L016-ST | 2026-08-02 A | 2026-08-03 → 2026-08-05 A (+2d) |  | 0% → 100% |  |
| RHD4CZ5L016ST1206 | Bedding works for GRP Pipe Line 1000 mm - (RD-L-16)-Z5-L016-ST | 2026-08-04 A | 2026-08-05 → 2026-08-08 A (+3d) |  | 0% → 100% |  |
| RHD4CZ5L016ST1306 | Installing for GRP Pipe Line 1000 mm - (RD-L-16)-Z5-L016-ST | 2026-08-06 A | 2026-08-08 → 2026-08-10 A (+2d) |  | 0% → 100% |  |
| RHD4CZ5L016ST1406 | Primary Test for GRP Pipe Line 1000 mm - (RD-L-16)-Z5-L016-ST | 2026-08-09 → 2027-02-01 (+176d) | 2026-08-10 → 2027-02-02 (+176d) |  |  |  |
| RHD4CZ5L016ST1506 | Backfilling and warning tape works for GRP Pipe Line 1000 mm - (RD-L-16)-Z5-L016-ST | 2026-08-11 → 2027-02-08 (+181d) | 2026-08-12 → 2027-02-09 (+181d) |  |  |  |
| 2414 | **RHD4-02-002-L016-(ST)-GRP Pipes - 600 mm diameter** | 2026-08-09 → 2026-08-04 (-5d) | 2026-08-19 → 2027-02-02 (+167d) |  |  |  |
| RHD4CZ5L016ST1102 | Excavation works for GRP Pipe Line 600 mm - (RD-L-16)-Z5-L016-ST | 2026-08-09 → 2026-08-04 A (-5d) | 2026-08-10 → 2026-08-05 A (-5d) |  | 0% → 100% |  |
| RHD4CZ5L016ST1202 | Bedding works for GRP Pipe Line 600 mm - (RD-L-16)-Z5-L016-ST | 2026-08-11 → 2026-08-06 A (-5d) | 2026-08-12 → 2026-08-08 A (-4d) |  | 0% → 100% | resources Skilled labor [4.36 h]; Unskilled Labor [8.82 h]; Equipment Opreator [8.82 h]; Excavator-Poclain [4.36 h]; Dump Truck [4.36 h]; GRP (600mm Diameter) - ST - Depth less than 1.5 m [4.03 m]; GRP (600mm Diameter) - ST - Depth: 1.51m - 2.5m → Skilled labor [4.36 h]; Unskilled Labor [8.8 h]; Equipment Opreator [8.8 h]; Excavator-Poclain [4.36 h]; Dump Truck [4.36 h]; GRP (600mm Diameter) - ST - Depth less than 1.5 m [4.03 m]; GRP (600mm Diameter) - ST - Depth: 1.51m - 2.5m |
| RHD4CZ5L016ST1302 | Installing for GRP Pipe Line 600 mm - (RD-L-16)-Z5-L016-ST | 2026-08-13 → 2026-08-09 A (-4d) | 2026-08-15 → 2026-08-10 A (-5d) |  | 0% → 100% | resources Unskilled Labor [8.82 h]; Plumber [4.36 h]; GRP (600mm Diameter) - ST - Depth less than 1.5 m [36.23 m]; GRP (600mm Diameter) - ST - Depth: 1.51m - 2.5m → Unskilled Labor [8.8 h]; Plumber [4.36 h]; GRP (600mm Diameter) - ST - Depth less than 1.5 m [36.23 m]; GRP (600mm Diameter) - ST - Depth: 1.51m - 2.5m |
| RHD4CZ5L016ST1502 | Backfilling and warning tape works for GRP Pipe Line 600 mm - (RD-L-16)-Z5-L016-ST | 2026-08-18 A | 2026-08-19 → 2026-09-20 A (+32d) |  | 0% → 100% | resources Skilled labor [4.36 h]; Unskilled Labor [8.82 h]; Equipment Opreator [8.82 h]; Excavator-Poclain [4.36 h]; Dump Truck [4.36 h]; GRP (600mm Diameter) - ST - Depth less than 1.5 m [16.1 m]; GRP (600mm Diameter) - ST - Depth: 1.51m - 2.5m → Skilled labor [4.36 h]; Unskilled Labor [8.8 h]; Equipment Opreator [8.8 h]; Excavator-Poclain [4.36 h]; Dump Truck [4.36 h]; GRP (600mm Diameter) - ST - Depth less than 1.5 m [16.1 m]; GRP (600mm Diameter) - ST - Depth: 1.51m - 2.5m |
| RHD4CZ5L016ST1402 | Primary Test for GRP Pipe Line 600 mm - (RD-L-16)-Z5-L016-ST | 2026-08-16 → 2027-02-01 (+169d) | 2026-08-17 → 2027-02-02 (+169d) |  |  |  |
| 6393 | **RHD4-02-002-L016-(ST)-GRP Pipes - 1300 mm diameter** | 2026-08-11 → 2027-02-01 (+174d) | 2026-08-22 → 2027-02-11 (+173d) |  |  |  |
| RHD4CZ5L016ST1109 | Excavation works for GRP Pipe Line 1300 mm - (RD-L-16)-Z5-L016-ST | 2026-08-11 → 2027-02-01 (+174d) | 2026-08-12 → 2027-02-02 (+174d) |  |  |  |
| RHD4CZ5L016ST1209 | Bedding works for GRP Pipe Line 1300 mm - (RD-L-16)-Z5-L016-ST | 2026-08-13 → 2027-02-03 (+174d) | 2026-08-15 → 2027-02-04 (+173d) |  |  |  |
| RHD4CZ5L016ST1309 | Installing for GRP Pipe Line 1300 mm - (RD-L-16)-Z5-L016-ST | 2026-08-16 → 2027-02-06 (+174d) | 2026-08-17 → 2027-02-07 (+174d) |  |  |  |
| RHD4CZ5L016ST1409 | Primary Test for GRP Pipe Line 1300 mm - (RD-L-16)-Z5-L016-ST | 2026-08-18 → 2027-02-08 (+174d) | 2026-08-19 → 2027-02-09 (+174d) |  |  |  |
| RHD4CZ5L016ST1509 | Backfilling and warning tape works for GRP Pipe Line 1300 mm - (RD-L-16)-Z5-L016-ST | 2026-08-20 → 2027-02-10 (+174d) | 2026-08-22 → 2027-02-11 (+173d) |  |  |  |
| 3753 | **RHD4-02-002-L016-(ST)-MH Works - 1500 mm diameter** |  | 2026-08-10 → 2027-02-11 (+185d) |  |  |  |
| RHD4CZ5L016ST3101 | Excavation and PC Blinding works for MH 1500 mm - (RD-L-16)-Z5-L016-ST | 2026-07-30 A | 2026-08-01 → 2026-08-06 A (+5d) |  | 0% → 100% |  |
| RHD4CZ5L016ST3201 | Installation of Base for MH 1500 mm - (RD-L-16)-Z5-L016-ST | 2026-08-02 → 2026-08-06 A (+4d) | 2026-08-03 → 2027-02-02 (+183d) |  | 0% → 53% |  |
| RHD4CZ5L016ST3301 | MH Ring and C.Slab works and Backfilling works for MH 1500 mm - (RD-L-16)-Z5-L016-ST | 2026-08-04 → 2027-02-03 (+183d) | 2026-08-05 → 2027-02-04 (+183d) |  |  |  |
| RHD4CZ5L016ST3401 | Steel Cover for MH 1500 mm - (RD-L-16)-Z5-L016-ST | 2026-08-06 → 2027-02-08 (+186d) | 2026-08-08 → 2027-02-09 (+185d) |  |  |  |
| RHD4CZ5L016ST3501 | Finishing, Benching, Testing works for MH 1500 mm - (RD-L-16)-Z5-L016-ST | 2026-08-09 → 2027-02-10 (+185d) | 2026-08-10 → 2027-02-11 (+185d) |  |  |  |
| 3752 | **RHD4-02-002-L016-(ST)-MH Works - 1200 mm diameter** |  | 2026-08-12 → 2027-02-14 (+186d) |  |  |  |
| RHD4CZ5L016ST3100 | Excavation and PC Blinding works for MH 1200 mm - (RD-L-16)-Z5-L016-ST | 2026-08-02 A | 2026-08-03 → 2026-08-06 A (+3d) |  | 0% → 100% | resources Skilled labor [7.3 h]; Unskilled Labor [7.3 h]; Equipment Opreator [11.65 h]; Excavator-Poclain [7.3 h]; Water Truck [0.76 h]; Dump Truck [3.59 h]; MH (1200mm Diameter) - ST - depth 1.50 - 2.5m [0.5 nr] → Skilled labor [7.3 h]; Unskilled Labor [7.3 h]; Equipment Opreator [11.65 h]; Excavator-Poclain [7.3 h]; Water Truck [0.8 h]; Dump Truck [3.59 h]; MH (1200mm Diameter) - ST - depth 1.50 - 2.5m [0.5 nr] |
| RHD4CZ5L016ST3200 | Installation of Base for MH 1200 mm - (RD-L-16)-Z5-L016-ST | 2026-08-04 → 2027-02-01 (+181d) | 2026-08-05 → 2027-02-02 (+181d) |  |  |  |
| RHD4CZ5L016ST3300 | MH Ring and C.Slab works and Backfilling works for MH 1200 mm - (RD-L-16)-Z5-L016-ST | 2026-08-06 → 2027-02-03 (+181d) | 2026-08-08 → 2027-02-04 (+180d) |  |  |  |
| RHD4CZ5L016ST3400 | Steel Cover for MH 1200 mm - (RD-L-16)-Z5-L016-ST | 2026-08-09 → 2027-02-10 (+185d) | 2026-08-10 → 2027-02-11 (+185d) |  |  |  |
| RHD4CZ5L016ST3500 | Finishing, Benching, Testing works for MH 1200 mm - (RD-L-16)-Z5-L016-ST | 2026-08-11 → 2027-02-13 (+186d) | 2026-08-12 → 2027-02-14 (+186d) |  |  |  |
| 3739 | **RHD4-02-002-L016-(ST)-GRP Pipes - 700 mm diameter** |  | 2026-08-08 → 2027-01-31 (+176d) |  |  |  |
| RHD4CZ5L016ST1103 | Excavation works for GRP Pipe Line 700 mm - (RD-L-16)-Z5-L016-ST | 2026-07-28 A | 2026-07-29 → 2026-08-05 A (+7d) |  | 0% → 100% |  |
| RHD4CZ5L016ST1203 | Bedding works for GRP Pipe Line 700 mm - (RD-L-16)-Z5-L016-ST | 2026-07-30 A | 2026-08-01 → 2026-08-08 A (+7d) |  | 0% → 100% |  |
| RHD4CZ5L016ST1303 | Installing for GRP Pipe Line 700 mm - (RD-L-16)-Z5-L016-ST | 2026-08-02 A | 2026-08-03 → 2026-08-10 A (+7d) |  | 0% → 100% |  |
| RHD4CZ5L016ST1503 | Backfilling and warning tape works for GRP Pipe Line 700 mm - (RD-L-16)-Z5-L016-ST | 2026-08-06 A | 2026-08-08 → 2026-08-12 A (+4d) |  | 0% → 100% |  |
| RHD4CZ5L016ST1403 | Primary Test for GRP Pipe Line 700 mm - (RD-L-16)-Z5-L016-ST | 2026-08-04 → 2027-01-30 (+179d) | 2026-08-05 → 2027-01-31 (+179d) |  |  |  |

| ID | Task | Start | Finish | Complete | Other |
| --- | --- | --- | --- | --- | --- |
| 3750 | **RHD4-02-002-L016-(ST)-UPVC Pipes - 300 mm diameter** |  | 2026-08-10 → 2027-02-04 (+178d) |  |  |
| RHD4CZ5L016ST2100 | Excavation works for UPVC Pipe Line 300 mm - (RD-L-16)-Z5-L016-ST | 2026-07-30 A | 2026-08-01 → 2026-08-05 A (+4d) | 0% → 100% |  |
| RHD4CZ5L016ST2200 | Bedding works for UPVC Pipe Line 300 mm - (RD-L-16)-Z5-L016-ST | 2026-08-02 A | 2026-08-03 → 2026-08-08 A (+5d) | 0% → 100% |  |
| RHD4CZ5L016ST2300 | Installing for UPVC Pipe Line 300 mm - (RD-L-16)-Z5-L016-ST | 2026-08-04 → 2026-09-19 A (+46d) | 2026-08-05 → 2027-01-31 (+179d) | 0% → 37% |  |
| RHD4CZ5L016ST2500 | Backfilling and warning tape works for UPVC Pipe Line 300 mm - (RD-L-16)-Z5-L016-ST | 2026-08-09 → 2026-09-21 A (+43d) | 2026-08-10 → 2027-02-04 (+178d) | 0% → 12% |  |
| RHD4CZ5L016ST2400 | Primary Test for UPVC Pipe Line 300 mm - (RD-L-16)-Z5-L016-ST | 2026-08-06 → 2027-02-01 (+179d) | 2026-08-08 → 2027-02-02 (+178d) |  |  |
| 3758 | **RHD4-02-002-L016-(ST)-Concrete Encasement** | 2026-08-04 → 2027-01-30 (+179d) | 2026-08-05 → 2027-01-31 (+179d) |  |  |
| RHD4CZ5L016ST6100 | Pipe Encasement for Storm Pipelines - (RD-L-16)-Z5-L016-ST | 2026-08-04 → 2027-01-30 (+179d) | 2026-08-05 → 2027-01-31 (+179d) |  |  |
| 3759 | **RHD4-02-002-Z5-L016-Catch Basin - ST** |  | 2026-08-20 → 2027-02-17 (+181d) |  |  |
| 6409 | **RHD4-02-002-L016-(ST)-Double Catch Basin Works** |  | 2026-08-12 → 2027-02-07 (+179d) |  |  |
| RHD4CZ5L016ST8100 | Excavation works for Double Catch Basin - (RD-L-16)-Z5-L016-ST | 2026-08-02 A | 2026-08-03 → 2026-08-06 A (+3d) | 0% → 100% |  |
| RHD4CZ5L016ST8200 | PC Blinding, Installation and Pipe connection for Double Catch Basin - (RD-L-16)-Z5-L016-ST | 2026-08-04 → 2027-01-30 (+179d) | 2026-08-05 → 2027-01-31 (+179d) |  |  |
| RHD4CZ5L016ST8300 | Rings & C.Slab & Final Backfillfor Double Catch Basin - (RD-L-16)-Z5-L016-ST | 2026-08-06 → 2027-02-01 (+179d) | 2026-08-08 → 2027-02-02 (+178d) |  |  |
| RHD4CZ5L016ST8400 | Steel Cover for Double Catch Basin - (RD-L-16)-Z5-L016-ST | 2026-08-09 → 2027-02-03 (+178d) | 2026-08-10 → 2027-02-04 (+178d) |  |  |
| RHD4CZ5L016ST8500 | Finishing and Insulation works for Double Catch Basin - (RD-L-16)-Z5-L016-ST | 2026-08-11 → 2027-02-06 (+179d) | 2026-08-12 → 2027-02-07 (+179d) |  |  |
| 3760 | **RHD4-02-002-L016-(ST)-Single Catch Basin Works** | 2026-08-09 → 2026-08-04 (-5d) | 2026-08-20 → 2027-02-17 (+181d) |  |  |
| RHD4CZ5L016ST7100 | Excavation works for Single Catch Basin - (RD-L-16)-Z5-L016-ST | 2026-08-09 → 2026-08-04 A (-5d) | 2026-08-10 → 2027-02-07 (+181d) | 0% → 80% |  |
| RHD4CZ5L016ST7200 | PC Blinding, Installation and Pipe connection for Single Catch Basin - (RD-L-16)-Z5-L016-ST | 2026-08-11 → 2026-09-21 A (+41d) | 2026-08-12 → 2027-02-09 (+181d) | 0% → 80% |  |
| RHD4CZ5L016ST7300 | Rings & C.Slab & Final Backfill for Single Catch Basin - (RD-L-16)-Z5-L016-ST | 2026-08-13 → 2026-10-27 A (+75d) | 2026-08-15 → 2027-02-11 (+180d) | 0% → 13% | resources Skilled labor [20.47 h]; Unskilled Labor [40.84 h]; Equipment Opreator [24.5 h]; Boom Truck [4.14 h]; Bobcat [20.47 h]; Single Catch basin - ST [5.25 nr] → Skilled labor [20.47 h]; Unskilled Labor [40.8 h]; Equipment Opreator [24.5 h]; Boom Truck [4.14 h]; Bobcat [20.47 h]; Single Catch basin - ST [5.25 nr] |
| RHD4CZ5L016ST7400 | Steel Cover for Single Catch Basin - (RD-L-16)-Z5-L016-ST | 2026-08-16 → 2027-02-13 (+181d) | 2026-08-17 → 2027-02-14 (+181d) |  |  |
| RHD4CZ5L016ST7500 | Finishing and Insulation works for Single Catch Basin - (RD-L-16)-Z5-L016-ST | 2026-08-18 → 2027-02-15 (+181d) | 2026-08-20 → 2027-02-17 (+181d) |  |  |
| 4299 | **RHD4-02-002-Z5-L016-Concrete Box Culvert - ST** | 2026-06-13 → 2026-06-11 (-2d) | 2026-08-20 → 2027-01-23 (+156d) |  |  |
| 4300 | **RHD4-02-002-L016-(ST)-Concrete Box Culvert** | 2026-06-13 → 2026-06-11 (-2d) | 2026-08-20 → 2027-01-23 (+156d) |  |  |
| RHD4CZ5L016ST4100 | Excavation works for Box Culvert - (RD-L-16)-Z5-C016-ST(Completed) | 2026-06-13 → 2026-06-11 A (-2d) | 2026-08-04 → 2026-08-03 A (-1d) | 0% → 100% | resources Skilled labor [32.02 h]; Unskilled Labor [32.02 h]; Equipment Opreator [95.94 h]; Excavator-Poclain [32.02 h]; Water Truck [32.02 h]; Dump Truck [32.02 h]; Excavation for culverts (all types of soil) including backfilling - ST [479.21 m3] → Skilled labor [32 h]; Unskilled Labor [32 h]; Equipment Opreator [95.94 h]; Excavator-Poclain [32 h]; Water Truck [32 h]; Dump Truck [32 h]; Excavation for culverts (all types of soil) including backfilling - ST [479.21 m3] |
| RHD4CZ5L016ST4400 | Raft works for Box Culvert - (RD-L-16)-Z5-C016-ST(Completed) | 2026-06-13 A | 2026-07-06 → 2026-07-16 A (+10d) | 0% → 100% | resources Carpenter [4.79 h]; Skilled labor [5.99 h]; Steel Fixer [1.2 h]; Equipment Opreator [9.8 h]; Boom Truck [0.22 h]; Concrete Mixer Truck [4.79 h]; Concrete Pump [4.79 h]; Supply and cast in place reinforced concrete for Box culverts - ST [94.62 m3]; Supply, placing, and fixing of high tensile reinforcement steel for Box culverts - ST [22.98 Ton] → Carpenter [4.8 h]; Skilled labor [5.99 h]; Steel Fixer [1.2 h]; Equipment Opreator [9.8 h]; Boom Truck [0.22 h]; Concrete Mixer Truck [4.8 h]; Concrete Pump [4.8 h]; Supply and cast in place reinforced concrete for Box culverts - ST [94.62 m3]; Supply, placing, and fixing of high tensile reinforcement steel for Box culverts - ST [22.98 Ton] |
| RHD4CZ5L016ST4200 | PC works for Box Culvert - (RD-L-16)-Z5-C016-ST(Completed) | 2026-06-13 → 2026-06-15 A (+2d) | 2026-08-01 → 2026-06-16 A (-46d) | 0% → 100% |  |
| RHD4CZ5L016ST4500 | Wall and slab works for Box Culvert - (RD-L-16)-Z5-C016-ST | 2026-08-05 → 2026-08-04 A (-1d) | 2026-08-06 → 2026-09-20 A (+45d) | 0% → 100% | resources Carpenter [12.85 h]; Skilled labor [16.01 h]; Steel Fixer [3.16 h]; Equipment Opreator [26.35 h]; Boom Truck [0.65 h]; Concrete Mixer Truck [12.85 h]; Concrete Pump [12.85 h]; Supply and cast in place reinforced concrete for Box culverts - ST [118.28 m3]; Supply, placing, and fixing of high tensile reinforcement steel for Box culverts - ST [34.48 Ton] → Carpenter [12.85 h]; Skilled labor [16 h]; Steel Fixer [3.16 h]; Equipment Opreator [26.35 h]; Boom Truck [0.65 h]; Concrete Mixer Truck [12.85 h]; Concrete Pump [12.85 h]; Supply and cast in place reinforced concrete for Box culverts - ST [118.28 m3]; Supply, placing, and fixing of high tensile reinforcement steel for Box culverts - ST [34.48 Ton] |
| RHD4CZ5L016ST4600 | Insulation and Testing for Box Culvert - (RD-L-16)-Z5-C016-ST | 2026-08-19 → 2026-10-01 A (+43d) | 2026-08-20 → 2026-10-03 A (+44d) | 0% → 100% |  |
| RHD4CZ5L016ST4700 | Backfilling works for Box Culvert - (RD-L-16)-Z5-C016-ST | 2026-08-15 → 2027-01-19 (+157d) | 2026-08-18 → 2027-01-23 (+158d) |  |  |
| 4301 | **RHD4-02-002-L016-(ST)-Concrete Chambers** | 2026-08-08 → 2026-08-20 (+12d) | 2026-08-16 → 2027-01-20 (+157d) |  |  |
| RHD4CZ5L016ST5100 | Excavation and Bedding for Concrete Chambers - for Box Culvert - (RD-L-16)-Z5-C016-ST | 2026-08-08 → 2026-08-20 A (+12d) | 2026-08-09 → 2027-01-13 (+157d) | 0% → 50% |  |
| RHD4CZ5L016ST5200 | PC works for Concrete Chambers - for Box Culvert - (RD-L-16)-Z5-C016-ST | 2026-08-10 → 2026-08-25 A (+15d) | 2026-08-11 → 2027-01-16 (+158d) | 0% → 50% |  |
| RHD4CZ5L016ST5300 | Installation for Concrete Chambers - for Box Culvert - (RD-L-16)-Z5-C016-ST | 2026-08-12 → 2026-08-30 A (+18d) | 2026-08-13 → 2027-01-18 (+158d) | 0% → 50% |  |
| RHD4CZ5L016ST5400 | Backfilling works for Concrete Chambers - for Box Culvert - (RD-L-16)-Z5-C016-ST | 2026-08-15 → 2027-01-19 (+157d) | 2026-08-16 → 2027-01-20 (+157d) |  |  |
| 3784 | **RHD4-02-002-Z5-L016-Sewage Network - SW** | 2026-10-11 → 2026-08-10 (-62d) | 2026-12-12 → 2027-06-07 (+177d) |  |  |
| 1 | **Missing ID** | 2026-10-11 → 2027-04-18 (+189d) | 2026-10-22 → 2027-04-29 (+189d) |  |  |
| RHD4CZ5L016SW4101 | Excavation and Bedding for Air Valve Chamber for HDPE force Main - (RD-L-16)-Z5-L016-SW | 2026-10-11 → 2027-04-18 (+189d) | 2026-10-12 → 2027-04-19 (+189d) |  |  |
| RHD4CZ5L016SW4201 | PC works for Air Valve Chamber for HDPE force Main - (RD-L-16)-Z5-L016-SW | 2026-10-13 → 2027-04-20 (+189d) | 2026-10-14 → 2027-04-21 (+189d) |  |  |
| RHD4CZ5L016SW4301 | Installation for Air Valve Chamber for HDPE force Main - (RD-L-16)-Z5-L016-SW | 2026-10-15 → 2027-04-22 (+189d) | 2026-10-16 → 2027-04-23 (+189d) |  |  |
| RHD4CZ5L016SW4401 | Backfilling works for Air Valve Chamber for HDPE force Main - (RD-L-16)-Z5-L016-SW | 2026-10-17 → 2027-04-24 (+189d) | 2026-10-18 → 2027-04-25 (+189d) |  |  |
| RHD4CZ5L016SW5101 | Installation for Air Valves for HDPE force Main - (RD-L-16)-Z5-L016-SW | 2026-10-19 → 2027-04-26 (+189d) | 2026-10-20 → 2027-04-27 (+189d) |  |  |
| RHD4CZ5L016SW5201 | Stem and Service box for Air Valves for HDPE force Main - (RD-L-16)-Z5-L016-SW | 2026-10-21 → 2027-04-28 (+189d) | 2026-10-22 → 2027-04-29 (+189d) |  |  |
| 957 | **RHD4-02-002-L016-(SW)-MH Works - 1200 mm diameter with Back drop** | 2026-10-11 → 2026-08-10 (-62d) | 2026-10-21 → 2027-04-24 (+185d) |  |  |
| RHD4CZ5L016SW3101 | Excavation and PC Blinding works for MH 1200 mm - (RD-L-16)-Z5-L016-SW | 2026-10-11 → 2026-08-10 A (-62d) | 2026-10-12 → 2026-08-11 A (-62d) | 0% → 100% |  |
| RHD4CZ5L016SW3201 | Installation of Base for MH 1200 mm - (RD-L-16)-Z5-L016-SW | 2026-10-13 → 2026-08-12 A (-62d) | 2026-10-14 → 2026-08-13 A (-62d) | 0% → 100% |  |
| RHD4CZ5L016SW3301 | MH Ring and C.Slab works and Backfilling works for MH 1200 mm - (RD-L-16)-Z5-L016-SW | 2026-10-15 → 2027-04-18 (+185d) | 2026-10-17 → 2027-04-19 (+184d) |  | resources Skilled labor [5.45 h]; Unskilled Labor [5.45 h]; Equipment Opreator [3.81 h]; Boom Truck [2.18 h]; Concrete Mixer Truck [1.63 h]; MH (1200mm Diameter) - SW - depth 2.51- 3.5 m with back drop [0.35 nr] → Skilled labor [5.45 h]; Unskilled Labor [5.45 h]; Equipment Opreator [3.81 h]; Boom Truck [2.18 h]; Concrete Mixer Truck [1.6 h]; MH (1200mm Diameter) - SW - depth 2.51- 3.5 m with back drop [0.35 nr] |
| RHD4CZ5L016SW3401 | Steel Cover for MH 1200 mm - (RD-L-16)-Z5-L016-SW | 2026-10-18 → 2027-04-20 (+184d) | 2026-10-19 → 2027-04-21 (+184d) |  | resources Skilled labor [3.59 h]; Unskilled Labor [7.3 h]; Equipment Opreator [0.76 h]; Boom Truck [0.76 h]; MH (1200mm Diameter) - SW - depth 2.51- 3.5 m with back drop [0.05 nr] → Skilled labor [3.59 h]; Unskilled Labor [7.3 h]; Equipment Opreator [0.8 h]; Boom Truck [0.8 h]; MH (1200mm Diameter) - SW - depth 2.51- 3.5 m with back drop [0.05 nr] |
| RHD4CZ5L016SW3501 | Finishing, Benching, Testing works for MH 1200 mm - (RD-L-16)-Z5-L016-SW | 2026-10-20 → 2027-04-22 (+184d) | 2026-10-21 → 2027-04-24 (+185d) |  |  |
| 4358 | **RHD4-02-002-L016-(SW)-HDPE Pipes - 250 mm diameter** | 2026-10-13 → 2027-04-18 (+187d) | 2026-10-24 → 2027-04-28 (+186d) |  |  |
| RHD4CZ5L016SW2600 | Excavation works for HDPE Force Main Pipeline 250 mm - (RD-L-16)-Z5-L016-SW | 2026-10-13 → 2027-04-18 (+187d) | 2026-10-14 → 2027-04-19 (+187d) |  |  |
| RHD4CZ5L016SW2700 | Bedding works for HDPE Force Main Pipeline 250 mm - (RD-L-16)-Z5-L016-SW | 2026-10-15 → 2027-04-20 (+187d) | 2026-10-17 → 2027-04-21 (+186d) |  | resources Skilled labor [9.58 h]; Unskilled Labor [19.17 h]; Equipment Opreator [19.17 h]; Excavator-Poclain [9.58 h]; Dump Truck [9.58 h]; HDPE (250mm Diameter) - SW - in trenches depth:0- 1.5m [11.29 m]; HDPE (250mm Diameter) - SW - in trenches depth: 1.51 than 2.5m → Skilled labor [9.6 h]; Unskilled Labor [19.2 h]; Equipment Opreator [19.2 h]; Excavator-Poclain [9.6 h]; Dump Truck [9.6 h]; HDPE (250mm Diameter) - SW - in trenches depth:0- 1.5m [11.29 m]; HDPE (250mm Diameter) - SW - in trenches depth: 1.51 than 2.5m |
| RHD4CZ5L016SW2800 | Installing for HDPE Force Main Pipeline 250 mm - (RD-L-16)-Z5-L016-SW | 2026-10-18 → 2027-04-22 (+186d) | 2026-10-19 → 2027-04-24 (+187d) |  | resources Unskilled Labor [32.78 h]; Plumber [16.44 h]; Equipment Opreator [16.44 h]; Boom Truck [16.44 h]; HDPE (250mm Diameter) - SW - in trenches depth:0- 1.5m [101.6 m]; HDPE (250mm Diameter) - SW - in trenches depth: 1.51 than 2.5m → Unskilled Labor [32.8 h]; Plumber [16.44 h]; Equipment Opreator [16.44 h]; Boom Truck [16.44 h]; HDPE (250mm Diameter) - SW - in trenches depth:0- 1.5m [101.6 m]; HDPE (250mm Diameter) - SW - in trenches depth: 1.51 than 2.5m |
| RHD4CZ5L016SW2900 | Primary Test for HDPE Force Main Pipeline 250 mm - (RD-L-16)-Z5-L016-SW | 2026-10-20 → 2027-04-25 (+187d) | 2026-10-21 → 2027-04-26 (+187d) |  |  |
| RHD4CZ5L016SW3000 | Backfilling and warning tape works for HDPE Force Main Pipeline 250 mm - (RD-L-16)-Z5-L016-SW | 2026-10-22 → 2027-04-27 (+187d) | 2026-10-24 → 2027-04-28 (+186d) |  |  |
| 3794 | **RHD4-02-002-L016-(SW)-MH Works - 1200 mm diameter** | 2026-10-15 → 2026-08-11 (-65d) | 2026-12-12 → 2027-06-07 (+177d) |  |  |
| RHD4CZ5L016SW3100 | Excavation and PC Blinding works for MH 1200 mm - (RD-L-16)-Z5-L016-SW | 2026-10-15 → 2026-08-11 A (-65d) | 2026-10-24 → 2027-04-21 (+179d) | 0% → 75% | resources Skilled labor [79.83 h]; Unskilled Labor [79.83 h]; Equipment Opreator [127.74 h]; Excavator-Poclain [79.83 h]; Water Truck [7.95 h]; Dump Truck [39.97 h]; MH (1200mm Diameter) - SW - depth 0 - 1.5m [1 nr]; MH (1200mm Diameter) - SW - depth 1.51 - 2.5m [1 nr]; MH (1200mm Diameter) - SW - depth 2.51 - 3.5m [0.75 nr]; MH (1200mm Diameter) - SW - depth 3.51 -4.5m [1.25 nr] → Skilled labor [79.83 h]; Unskilled Labor [79.83 h]; Equipment Opreator [127.74 h]; Excavator-Poclain [79.83 h]; Water Truck [7.95 h]; Dump Truck [40 h]; MH (1200mm Diameter) - SW - depth 0 - 1.5m [1 nr]; MH (1200mm Diameter) - SW - depth 1.51 - 2.5m [1 nr]; MH (1200mm Diameter) - SW - depth 2.51 - 3.5m [0.75 nr]; MH (1200mm Diameter) - SW - depth 3.51 -4.5m [1.25 nr] |
| RHD4CZ5L016SW3200 | Installation of Base for MH 1200 mm - (RD-L-16)-Z5-L016-SW | 2026-10-25 → 2026-08-12 A (-74d) | 2026-11-07 → 2027-04-28 (+172d) | 0% → 50% |  |
| RHD4CZ5L016SW3300 | MH Ring and C.Slab works and Backfilling works for MH 1200 mm - (RD-L-16)-Z5-L016-SW | 2026-11-08 → 2027-04-29 (+172d) | 2026-11-21 → 2027-05-12 (+172d) |  | resources Skilled labor [130.68 h]; Unskilled Labor [130.68 h]; Equipment Opreator [91.48 h]; Boom Truck [52.27 h]; Concrete Mixer Truck [39.21 h]; MH (1200mm Diameter) - SW - depth 0 - 1.5m [1.4 nr]; MH (1200mm Diameter) - SW - depth 1.51 - 2.5m [1.4 nr]; MH (1200mm Diameter) - SW - depth 2.51 - 3.5m [1.05 nr]; MH (1200mm Diameter) - SW - depth 3.51 -4.5m [1.75 nr] → Skilled labor [130.68 h]; Unskilled Labor [130.68 h]; Equipment Opreator [91.48 h]; Boom Truck [52.27 h]; Concrete Mixer Truck [39.2 h]; MH (1200mm Diameter) - SW - depth 0 - 1.5m [1.4 nr]; MH (1200mm Diameter) - SW - depth 1.51 - 2.5m [1.4 nr]; MH (1200mm Diameter) - SW - depth 2.51 - 3.5m [1.05 nr]; MH (1200mm Diameter) - SW - depth 3.51 -4.5m [1.75 nr] |
| RHD4CZ5L016SW3400 | Steel Cover for MH 1200 mm - (RD-L-16)-Z5-L016-SW | 2026-11-22 → 2027-05-13 (+172d) | 2026-11-28 → 2027-05-24 (+177d) |  |  |
| RHD4CZ5L016SW3500 | Finishing, Benching, Testing works for MH 1200 mm - (RD-L-16)-Z5-L016-SW | 2026-11-29 → 2027-05-25 (+177d) | 2026-12-12 → 2027-06-07 (+177d) |  |  |
| 3785 | **RHD4-02-002-L016-(SW)-GRP Pipes - 300 mm diameter** | 2026-11-08 → 2027-04-29 (+172d) | 2026-12-01 → 2027-05-27 (+177d) |  |  |
| RHD4CZ5L016SW1100 | Excavation works for GRP Pipe Line 300 mm - (RD-L-16)-Z5-L016-SW | 2026-11-08 → 2027-04-29 (+172d) | 2026-11-09 → 2027-05-01 (+173d) |  |  |
| RHD4CZ5L016SW1200 | Bedding works for GRP Pipe Line 300 mm - (RD-L-16)-Z5-L016-SW | 2026-11-10 → 2027-05-02 (+173d) | 2026-11-11 → 2027-05-03 (+173d) |  |  |
| RHD4CZ5L016SW1300 | Installing for GRP Pipe Line 300 mm - (RD-L-16)-Z5-L016-SW | 2026-11-22 → 2027-05-13 (+172d) | 2026-11-23 → 2027-05-19 (+177d) |  |  |
| RHD4CZ5L016SW1400 | Primary Test for GRP Pipe Line 300 mm - (RD-L-16)-Z5-L016-SW | 2026-11-24 → 2027-05-20 (+177d) | 2026-11-25 → 2027-05-22 (+178d) |  |  |
| RHD4CZ5L016SW1500 | Backfilling and warning tape works for GRP Pipe Line 300 mm - (RD-L-16)-Z5-L016-SW | 2026-11-26 → 2027-05-23 (+178d) | 2026-12-01 → 2027-05-27 (+177d) |  |  |
| 3790 | **RHD4-02-002-L016-(SW)-UPVC Pipes - 200 mm diameter** | 2026-11-10 → 2026-08-12 (-90d) | 2026-12-06 → 2027-05-25 (+170d) |  |  |
| RHD4CZ5L016SW2100 | Excavation works for UPVC Pipe Line 200 mm - (RD-L-16)-Z5-L016-SW | 2026-11-10 → 2026-08-12 A (-90d) | 2026-11-14 → 2026-09-16 A (-59d) | 0% → 100% |  |
| RHD4CZ5L016SW2200 | Bedding works for UPVC Pipe Line 200 mm - (RD-L-16)-Z5-L016-SW | 2026-11-15 → 2026-08-15 A (-92d) | 2026-11-18 → 2026-09-19 A (-60d) | 0% → 100% |  |
| RHD4CZ5L016SW2300 | Installing for UPVC Pipe Line 200 mm - (RD-L-16)-Z5-L016-SW | 2026-11-24 → 2026-08-16 A (-100d) | 2026-11-28 → 2026-09-21 A (-68d) | 0% → 100% |  |

| ID | Task | Start | Finish | Duration | Complete | Other |
| --- | --- | --- | --- | --- | --- | --- |
| RHD4CZ5L016SW2500 | Backfilling and warning tape works for UPVC Pipe Line 200 mm - (RD-L-16)-Z5-L016-SW | 2026-12-02 → 2026-08-18 A (-106d) | 2026-12-06 → 2026-08-22 A (-106d) |  | 0% → 100% |  |
| RHD4CZ5L016SW2400 | Primary Test for UPVC Pipe Line 200 mm - (RD-L-16)-Z5-L016-SW | 2026-11-29 → 2026-09-17 A (-73d) | 2026-12-01 → 2027-05-25 (+175d) |  | 0% → 8% |  |
| 3821 | **RHD4-02-002-Z5-L016-Potable Network - PT** | 2026-12-07 → 2026-08-04 (-125d) | 2027-02-03 → 2027-07-19 (+166d) |  |  |  |
| 3824 | **RHD4-02-002-L016-(PT)-HDPE Pipes - 200 mm diameter** | 2026-12-07 → 2027-05-29 (+173d) | 2026-12-20 → 2027-06-10 (+172d) |  |  |  |
| RHD4CZ5L016PT1102 | Excavation works for HDPE Pipline 200 mm - (RD-L-16)-Z5-L016-PT | 2026-12-07 → 2027-05-29 (+173d) | 2026-12-08 → 2027-05-30 (+173d) |  |  | resources Skilled labor [4.03 h]; Unskilled Labor [4.03 h]; Equipment Opreator [4.79 h]; Excavator-Poclain [4.03 h]; Dump Truck [0.76 h]; HDPE (200mm Diameter) - PT - Depth: less than 1.5m [9.19 m] → Skilled labor [4 h]; Unskilled Labor [4 h]; Equipment Opreator [4.8 h]; Excavator-Poclain [4 h]; Dump Truck [0.8 h]; HDPE (200mm Diameter) - PT - Depth: less than 1.5m [9.19 m] |
| RHD4CZ5L016PT1202 | Bedding works for HDPE Pipline 200 mm - (RD-L-16)-Z5-L016-PT | 2026-12-09 → 2027-05-31 (+173d) | 2026-12-10 → 2027-06-01 (+173d) |  |  |  |
| RHD4CZ5L016PT1302 | Installing for HDPE Pipline 200 mm - (RD-L-16)-Z5-L016-PT | 2026-12-12 → 2027-06-02 (+172d) | 2026-12-15 → 2027-06-06 (+173d) |  |  |  |
| RHD4CZ5L016PT1402 | Primary Test for HDPE Pipline 200 mm - (RD-L-16)-Z5-L016-PT | 2026-12-16 → 2027-06-07 (+173d) | 2026-12-17 → 2027-06-08 (+173d) |  |  |  |
| RHD4CZ5L016PT1502 | Backfilling and warning tape works for HDPE Pipline 200 mm - (RD-L-16)-Z5-L016-PT | 2026-12-19 → 2027-06-09 (+172d) | 2026-12-20 → 2027-06-10 (+172d) |  |  |  |
| 3823 | **RHD4-02-002-L016-(PT)-HDPE Pipes - 160 mm diameter** | 2026-12-09 → 2027-05-31 (+173d) | 2027-01-07 → 2027-06-29 (+173d) |  |  |  |
| RHD4CZ5L016PT1101 | Excavation works for HDPE Pipline 160 mm - (RD-L-16)-Z5-L016-PT | 2026-12-09 → 2027-05-31 (+173d) | 2026-12-12 → 2027-06-02 (+172d) |  |  |  |
| RHD4CZ5L016PT1201 | Bedding works for HDPE Pipline 160 mm - (RD-L-16)-Z5-L016-PT | 2026-12-13 → 2027-06-03 (+172d) | 2026-12-15 → 2027-06-06 (+173d) |  |  |  |
| RHD4CZ5L016PT1301 | Installing for HDPE Pipline 160 mm - (RD-L-16)-Z5-L016-PT | 2026-12-16 → 2027-06-07 (+173d) | 2026-12-21 → 2027-06-12 (+173d) |  |  |  |
| RHD4CZ5L016PT1401 | Primary Test for HDPE Pipline 160 mm - (RD-L-16)-Z5-L016-PT | 2027-01-02 → 2027-06-23 (+172d) | 2027-01-03 → 2027-06-24 (+172d) |  |  |  |
| RHD4CZ5L016PT1501 | Backfilling and warning tape works for HDPE Pipline 160 mm - (RD-L-16)-Z5-L016-PT | 2027-01-04 → 2027-06-26 (+173d) | 2027-01-07 → 2027-06-29 (+173d) |  |  |  |
| 3822 | **RHD4-02-002-L016-(PT)-HDPE Pipes - 110 mm diameter** | 2026-12-13 → 2026-08-04 (-131d) | 2027-01-10 → 2027-07-01 (+172d) |  |  |  |
| RHD4CZ5L016PT1100 | Excavation works for HDPE Pipline 110 mm - (RD-L-16)-Z5-L016-PT | 2026-12-13 → 2026-08-04 A (-131d) | 2026-12-14 → 2027-06-05 (+173d) |  | 0% → 66% |  |
| RHD4CZ5L016PT1200 | Bedding works for HDPE Pipline 110 mm - (RD-L-16)-Z5-L016-PT | 2026-12-16 → 2026-08-06 A (-132d) | 2026-12-17 → 2027-06-08 (+173d) |  | 0% → 66% |  |
| RHD4CZ5L016PT1300 | Installing for HDPE Pipline 110 mm - (RD-L-16)-Z5-L016-PT | 2026-12-22 → 2026-08-08 A (-136d) | 2026-12-23 → 2027-06-14 (+173d) |  | 0% → 66% |  |
| RHD4CZ5L016PT1400 | Primary Test for HDPE Pipline 110 mm - (RD-L-16)-Z5-L016-PT | 2027-01-04 → 2027-06-26 (+173d) | 2027-01-07 → 2027-06-29 (+173d) |  |  |  |
| RHD4CZ5L016PT1500 | Backfilling and warning tape works for HDPE Pipline 110 mm - (RD-L-16)-Z5-L016-PT | 2027-01-09 → 2027-06-30 (+172d) | 2027-01-10 → 2027-07-01 (+172d) |  |  |  |
| 3827 | **RHD4-02-002-L016-(PT)-Gate Valves (Direct Buried)** | 2026-12-22 → 2027-06-13 (+173d) | 2027-01-13 → 2027-07-05 (+173d) |  |  |  |
| RHD4CZ5L016PT3100 | Installation for Direct Buried Gate Valves - (RD-L-16)-Z5-L016-PT | 2026-12-22 → 2027-06-13 (+173d) | 2026-12-24 → 2027-06-15 (+173d) |  |  |  |
| RHD4CZ5L016PT3200 | Stem and Service box for Direct Buried Gate Valves - (RD-L-16)-Z5-L016-PT | 2027-01-11 → 2027-07-03 (+173d) | 2027-01-13 → 2027-07-05 (+173d) |  |  |  |
| 3830 | **RHD4-02-002-L016-(PT)-Wash out Valve Chambers** | 2026-12-21 → 2027-06-12 (+173d) | 2027-01-20 → 2027-07-12 (+173d) |  |  |  |
| RHD4CZ5L016PT2101 | Excavation and Bedding for Wash out Valve Chambers for Potable Water Network - (RD-L-16)-Z5-L016-PT | 2026-12-21 → 2027-06-12 (+173d) | 2026-12-22 → 2027-06-13 (+173d) |  |  |  |
| RHD4CZ5L016PT2201 | PC works for Wash out Valve Chambers for Potable Water Network - (RD-L-16)-Z5-L016-PT | 2027-01-14 → 2027-07-06 (+173d) | 2027-01-16 → 2027-07-07 (+172d) |  |  |  |
| RHD4CZ5L016PT2301 | Installation for Wash out Valve Chambers for Potable Water Network - (RD-L-16)-Z5-L016-PT | 2027-01-17 → 2027-07-08 (+172d) | 2027-01-18 → 2027-07-10 (+173d) |  |  |  |
| RHD4CZ5L016PT2401 | Backfilling works for Wash out Valve Chambers for Potable Water Network - (RD-L-16)-Z5-L016-PT | 2027-01-19 → 2027-07-11 (+173d) | 2027-01-20 → 2027-07-12 (+173d) |  |  |  |
| 3831 | **RHD4-02-002-L016-(PT)-Wash out Valves** | 2026-12-23 → 2027-06-14 (+173d) | 2027-01-23 → 2027-07-14 (+172d) |  |  |  |
| RHD4CZ5L016PT3102 | Installation for Wash out Valves for Potable Water Network - (RD-L-16)-Z5-L016-PT | 2026-12-23 → 2027-06-14 (+173d) | 2026-12-24 → 2027-06-15 (+173d) |  |  |  |
| RHD4CZ5L016PT3202 | Stem and Service box for Wash out Valves for Potable Water Network - (RD-L-16)-Z5-L016-PT | 2027-01-21 → 2027-07-13 (+173d) | 2027-01-23 → 2027-07-14 (+172d) |  |  |  |
| 3834 | **RHD4-02-002-L016-(PT)-Fire Hydrant** | 2027-01-11 → 2027-07-03 (+173d) | 2027-02-03 → 2027-07-19 (+166d) |  |  |  |
| RHD4CZ5L016PT4100 | Excavation and Bedding and Pipe Installation for Fire Hydrant - (RD-L-16)-Z5-L016-PT | 2027-01-11 → 2027-07-03 (+173d) | 2027-01-14 → 2027-07-06 (+173d) |  |  |  |
| RHD4CZ5L016PT4200 | Valve Installation for Fire Hydrant - (RD-L-16)-Z5-L016-PT | 2027-01-16 → 2027-07-07 (+172d) | 2027-01-18 → 2027-07-10 (+173d) |  |  |  |
| RHD4CZ5L016PT4300 | Stem for Fire Hydrant - (RD-L-16)-Z5-L016-PT | 2027-01-19 → 2027-07-11 (+173d) | 2027-01-21 → 2027-07-13 (+173d) |  |  |  |
| RHD4CZ5L016PT4400 | Fire Installation for Fire Hydrant - (RD-L-16)-Z5-L016-PT | 2027-01-23 → 2027-07-14 (+172d) | 2027-01-25 → 2027-07-17 (+173d) |  |  |  |
| RHD4CZ5L016PT4500 | Protection Barriers for Fire Hydrant - (RD-L-16)-Z5-L016-PT | 2027-01-26 → 2027-07-18 (+173d) | 2027-02-03 → 2027-07-19 (+166d) | 8d → 2d |  |  |
| 3835 | **RHD4-02-002-L016-(PT)-Concrete Encasement** | 2026-12-22 → 2027-06-13 (+173d) | 2026-12-31 → 2027-06-22 (+173d) |  |  |  |
| RHD4CZ5L016PT5100 | Pipe Encasement for Potable Pipelines - (RD-L-16)-Z5-L016-PT | 2026-12-22 → 2027-06-13 (+173d) | 2026-12-31 → 2027-06-22 (+173d) |  |  |  |
| 3836 | **RHD4-02-002-Z5-L016-Irrigation Network - IRR** | 2026-12-13 → 2026-08-04 (-131d) | 2027-01-26 → 2027-07-14 (+169d) |  |  |  |
| 3839 | **RHD4-02-002-L016-(IRR)-HDPE Pipes - 200 mm diameter** | 2026-12-13 → 2027-06-03 (+172d) | 2026-12-30 → 2027-06-21 (+173d) |  |  |  |
| RHD4CZ5L016IRR1102 | Excavation works for HDPE Pipline 200 mm - (RD-L-16)-Z5-L016-IRR | 2026-12-13 → 2027-06-03 (+172d) | 2026-12-16 → 2027-06-07 (+173d) |  |  |  |
| RHD4CZ5L016IRR1202 | Bedding works for HDPE Pipline 200 mm - (RD-L-16)-Z5-L016-IRR | 2026-12-17 → 2027-06-08 (+173d) | 2026-12-20 → 2027-06-10 (+172d) |  |  |  |
| RHD4CZ5L016IRR1302 | Installing for HDPE Pipline 200 mm - (RD-L-16)-Z5-L016-IRR | 2026-12-21 → 2027-06-12 (+173d) | 2026-12-24 → 2027-06-15 (+173d) |  |  |  |
| RHD4CZ5L016IRR1402 | Primary Test for HDPE Pipline 200 mm - (RD-L-16)-Z5-L016-IRR | 2026-12-26 → 2027-06-16 (+172d) | 2026-12-27 → 2027-06-17 (+172d) |  |  |  |
| RHD4CZ5L016IRR1502 | Backfilling and warning tape works for HDPE Pipline 200 mm - (RD-L-16)-Z5-L016-IRR | 2026-12-28 → 2027-06-19 (+173d) | 2026-12-30 → 2027-06-21 (+173d) |  |  |  |
| 1770 | **RHD4-02-002-L016-(IRR)-Air Valves** | 2027-01-10 → 2027-07-01 (+172d) | 2027-01-13 → 2027-07-05 (+173d) |  |  |  |
| RHD4CZ5L016IRR3103 | Installation for Air Valves for Irrigation Network - (RD-L-16)-Z5-L016-IRR | 2027-01-10 → 2027-07-01 (+172d) | 2027-01-11 → 2027-07-03 (+173d) |  |  |  |
| RHD4CZ5L016IRR3203 | Stem and Service box for Air Valves for Irrigation Network - (RD-L-16)-Z5-L016-IRR | 2027-01-12 → 2027-07-04 (+173d) | 2027-01-13 → 2027-07-05 (+173d) |  |  |  |
| 6107 | **RHD4-02-002-L016-(IRR)-HDPE Pipes - 160 mm diameter** | 2027-01-12 → 2026-08-04 (-161d) | 2027-01-23 → 2027-07-07 (+165d) |  |  |  |
| RHD4CZ5L016IRR1100 | Excavation works for HDPE Pipline 160 mm - (RD-L-16)-Z5-L016-IRR | 2027-01-12 → 2026-08-04 A (-161d) | 2027-01-13 → 2026-08-05 A (-161d) |  | 0% → 100% | resources Skilled labor [8.17 h]; Unskilled Labor [8.17 h]; Equipment Opreator [9.8 h]; Excavator-Poclain [8.17 h]; Dump Truck [1.63 h]; HDPE (160mm Diameter) - TSE - Depth: less than 1.5m [11.2 m] → Skilled labor [8.17 h]; Unskilled Labor [8.17 h]; Equipment Opreator [9.8 h]; Excavator-Poclain [8.17 h]; Dump Truck [1.6 h]; HDPE (160mm Diameter) - TSE - Depth: less than 1.5m [11.2 m] |
| RHD4CZ5L016IRR1200 | Bedding works for HDPE Pipline 160 mm - (RD-L-16)-Z5-L016-IRR | 2027-01-14 → 2026-08-06 A (-161d) | 2027-01-16 → 2026-08-08 A (-161d) |  | 0% → 100% |  |
| RHD4CZ5L016IRR1300 | Installing for HDPE Pipline 160 mm - (RD-L-16)-Z5-L016-IRR | 2027-01-17 → 2026-08-08 A (-162d) | 2027-01-18 → 2026-08-09 A (-162d) |  | 0% → 100% |  |
| RHD4CZ5L016IRR1400 | Primary Test for HDPE Pipline 160 mm - (RD-L-16)-Z5-L016-IRR | 2027-01-19 → 2027-07-04 (+166d) | 2027-01-20 → 2027-07-05 (+166d) |  |  |  |
| RHD4CZ5L016IRR1500 | Backfilling and warning tape works for HDPE Pipline 160 mm - (RD-L-16)-Z5-L016-IRR | 2027-01-21 → 2027-07-06 (+166d) | 2027-01-23 → 2027-07-07 (+165d) |  |  |  |
| 6115 | **RHD4-02-002-L016-(IRR)-Gate Valves (Direct Buried)** | 2027-01-17 → 2027-07-04 (+168d) | 2027-01-26 → 2027-07-11 (+166d) |  |  |  |
| RHD4CZ5L016IRR3100 | Installation for Direct Buried Gate Valves - (RD-L-16)-Z5-L016-IRR | 2027-01-17 → 2027-07-04 (+168d) | 2027-01-19 → 2027-07-06 (+168d) |  |  | resources Unskilled Labor [27.23 h]; Plumber [27.23 h]; Gate valves dia 100 mm - TSE [3.6 nr]; Gate valves dia 150 mm - TSE [0.9 nr] → Unskilled Labor [27.2 h]; Plumber [27.2 h]; Gate valves dia 100 mm - TSE [3.6 nr]; Gate valves dia 150 mm - TSE [0.9 nr] |
| RHD4CZ5L016IRR3200 | Stem and Service box for Direct Buried Gate Valves - (RD-L-16)-Z5-L016-IRR | 2027-01-24 → 2027-07-08 (+165d) | 2027-01-26 → 2027-07-11 (+166d) |  |  | resources Unskilled Labor [27.23 h]; Plumber [27.23 h]; Gate valves dia 100 mm - TSE [0.4 nr]; Gate valves dia 150 mm - TSE [0.1 nr] → Unskilled Labor [27.2 h]; Plumber [27.2 h]; Gate valves dia 100 mm - TSE [0.4 nr]; Gate valves dia 150 mm - TSE [0.1 nr] |
| 6116 | **RHD4-02-002-L016-(IRR)-Butterfly Valve Chamber** | 2027-01-12 → 2027-07-04 (+173d) | 2027-01-20 → 2027-07-12 (+173d) |  |  |  |
| RHD4CZ5L016IRR2100 | Excavation and Bedding for Butterfly Valve Chamber for Irrigation Network - (RD-L-16)-Z5-L016-IRR | 2027-01-12 → 2027-07-04 (+173d) | 2027-01-13 → 2027-07-05 (+173d) |  |  |  |
| RHD4CZ5L016IRR2200 | PC works for Butterfly Valve Chamber for Irrigation Network - (RD-L-16)-Z5-L016-IRR | 2027-01-14 → 2027-07-06 (+173d) | 2027-01-16 → 2027-07-07 (+172d) |  |  |  |
| RHD4CZ5L016IRR2300 | Installation for Butterfly Valve Chamber for Irrigation Network - (RD-L-16)-Z5-L016-IRR | 2027-01-17 → 2027-07-08 (+172d) | 2027-01-18 → 2027-07-10 (+173d) |  |  |  |
| RHD4CZ5L016IRR2400 | Backfilling works for Butterfly Valve Chamber for Irrigation Network - (RD-L-16)-Z5-L016-IRR | 2027-01-19 → 2027-07-11 (+173d) | 2027-01-20 → 2027-07-12 (+173d) |  |  |  |
| 6117 | **RHD4-02-002-L016-(IRR)-Butterfly Valves** | 2027-01-19 → 2027-07-11 (+173d) | 2027-01-23 → 2027-07-14 (+172d) |  |  |  |
| RHD4CZ5L016IRR3101 | Installation for Butterfly Valves for Irrigation Network - (RD-L-16)-Z5-L016-IRR | 2027-01-19 → 2027-07-11 (+173d) | 2027-01-20 → 2027-07-12 (+173d) |  |  |  |
| RHD4CZ5L016IRR3201 | Stem and Service box for Butterfly Valves for Irrigation Network - (RD-L-16)-Z5-L016-IRR | 2027-01-21 → 2027-07-13 (+173d) | 2027-01-23 → 2027-07-14 (+172d) |  |  |  |
| 1769 | **RHD4-02-002-L016-(IRR)-Air Valve Chamber** | 2026-12-31 → 2027-06-22 (+173d) | 2027-01-11 → 2027-07-03 (+173d) |  |  |  |
| RHD4CZ5L016IRR2102 | Excavation and Bedding for Valve Chamber for Irrigation Network - (RD-L-16)-Z5-L016-IRR | 2026-12-31 → 2027-06-22 (+173d) | 2027-01-02 → 2027-06-23 (+172d) |  |  |  |
| RHD4CZ5L016IRR2202 | PC works for Valve Chamber for Irrigation Network - (RD-L-16)-Z5-L016-IRR | 2027-01-03 → 2027-06-24 (+172d) | 2027-01-04 → 2027-06-26 (+173d) |  |  |  |

| ID | Task | Start | Finish | Duration | Other |
| --- | --- | --- | --- | --- | --- |
| RHD4CZ5L016IRR2302 | Installation for Valve Chamber for Irrigation Network - (RD-L-16)-Z5-L016-IRR | 2027-01-05 → 2027-06-27 (+173d) | 2027-01-09 → 2027-06-30 (+172d) |  |  |
| RHD4CZ5L016IRR2402 | Backfilling works for Valve Chamber for Irrigation Network - (RD-L-16)-Z5-L016-IRR | 2027-01-10 → 2027-07-01 (+172d) | 2027-01-11 → 2027-07-03 (+173d) |  |  |
| 3841 | **RHD4-02-002-L016-(IRR)-HDPE Pipes - 315 mm diameter** | 2026-12-15 → 2027-06-06 (+173d) | 2026-12-26 → 2027-06-16 (+172d) |  |  |
| RHD4CZ5L016IRR1104 | Excavation works for HDPE Pipline 315 mm - (RD-L-16)-Z5-L016-IRR | 2026-12-15 → 2027-06-06 (+173d) | 2026-12-16 → 2027-06-07 (+173d) |  |  |
| RHD4CZ5L016IRR1204 | Bedding works for HDPE Pipline 315 mm - (RD-L-16)-Z5-L016-IRR | 2026-12-17 → 2027-06-08 (+173d) | 2026-12-19 → 2027-06-09 (+172d) |  |  |
| RHD4CZ5L016IRR1304 | Installing for HDPE Pipline 315 mm - (RD-L-16)-Z5-L016-IRR | 2026-12-20 → 2027-06-10 (+172d) | 2026-12-21 → 2027-06-12 (+173d) |  |  |
| RHD4CZ5L016IRR1404 | Primary Test for HDPE Pipline 315 mm - (RD-L-16)-Z5-L016-IRR | 2026-12-22 → 2027-06-13 (+173d) | 2026-12-23 → 2027-06-14 (+173d) |  |  |
| RHD4CZ5L016IRR1504 | Backfilling and warning tape works for HDPE Pipline 315 mm - (RD-L-16)-Z5-L016-IRR | 2026-12-24 → 2027-06-15 (+173d) | 2026-12-26 → 2027-06-16 (+172d) |  |  |
| 3870 | **RHD4-02-002-Z5-L016-Medium Voltage Network - MV** | 2027-01-10 → 2027-06-26 (+167d) | 2027-02-02 → 2027-08-03 (+182d) |  |  |
| 3871 | **RHD4-02-002-L016-(MV)-Medium Voltage cable trench** | 2027-01-10 → 2027-06-26 (+167d) | 2027-01-25 → 2027-07-25 (+181d) |  |  |
| RHD4CZ5L016MV1100 | Excavation for Medium Voltage Trench - (RD-L-16)-Z5-L016-MV | 2027-01-10 → 2027-06-26 (+167d) | 2027-01-17 → 2027-07-10 (+174d) | 7d → 13d | resources Skilled labor [137.87 h]; Unskilled Labor [275.74 h]; Equipment Opreator [413.62 h]; Excavator-Poclain [137.87 h]; Dump Truck [275.74 h]; Excavation for Trench size 40cm wide and 80cm deep ( for 1 cables) [367.12 m3]; Excavation for Trench size 60cm wide and 80cm deep ( for 2 cables) [7.53 m3]; Excavation for Trench size 120cm wide and 80cm deep (for 4 cables) [511.63 m3] → Skilled labor [137.87 h]; Unskilled Labor [275.74 h]; Equipment Opreator [413.6 h]; Excavator-Poclain [137.87 h]; Dump Truck [275.74 h]; Excavation for Trench size 40cm wide and 80cm deep ( for 1 cables) [367.12 m3]; Excavation for Trench size 60cm wide and 80cm deep ( for 2 cables) [7.53 m3]; Excavation for Trench size 120cm wide and 80cm deep (for 4 cables) [511.63 m3] |
| RHD4CZ5L016MV1200 | Trench Backfilling for Medium Voltage Network - (RD-L-16)-Z5-L016-MV | 2027-01-18 → 2027-07-11 (+174d) | 2027-01-25 → 2027-07-25 (+181d) | 7d → 13d |  |
| 3873 | **RHD4-02-002-L016-(MV)-Medium Voltage cables 3Cx 500 mm²** | 2027-01-18 → 2027-07-11 (+174d) | 2027-02-02 → 2027-08-03 (+182d) |  |  |
| RHD4CZ5L016MV3100 | Installation of Medium Voltage Cables 3Cx 500 mm² - (RD-L-16)-Z5-L016-MV | 2027-01-18 → 2027-07-11 (+174d) | 2027-01-24 → 2027-07-19 (+176d) | 6d → 8d |  |
| RHD4CZ5L016MV3200 | Joints Installation of Medium Voltage Cables 3Cx 500 mm² - (RD-L-16)-Z5-L016-MV | 2027-01-25 → 2027-07-20 (+176d) | 2027-01-26 → 2027-07-21 (+176d) |  |  |
| RHD4CZ5L016MV3300 | Testing of Medium Voltage Cables 3Cx 500 mm² - (RD-L-16)-Z5-L016-MV | 2027-01-27 → 2027-07-26 (+180d) | 2027-02-02 → 2027-08-03 (+182d) | 6d → 8d |  |
| 1982 | **RHD4-02-002-L07-(MV)-Medium Voltage cables 3Cx 50 mm²** | 2027-01-25 → 2027-07-20 (+176d) | 2027-01-26 → 2027-07-21 (+176d) |  |  |
| RHD4CZ5L016MV3401 | Termination of Medium Voltage Cables 3Cx 50 mm² - (RD-L-16)-Z5-L016-MV | 2027-01-25 → 2027-07-20 (+176d) | 2027-01-26 → 2027-07-21 (+176d) |  |  |
| 3877 | **RHD4-02-002-Z5-L016-Low Voltage Network - LV** | 2027-02-03 → 2027-08-04 (+182d) | 2027-02-11 → 2027-08-12 (+182d) |  |  |
| 3880 | **RHD4-02-002-L016-(LV)-Low Voltage cables** | 2027-02-03 → 2027-08-04 (+182d) | 2027-02-11 → 2027-08-12 (+182d) |  |  |
| RHD4CZ5L016LV3100 | Excavation for Low Voltage Cables for Low Voltage Network - (RD-L-16)-Z5-L016-LV | 2027-02-03 → 2027-08-04 (+182d) | 2027-02-04 → 2027-08-05 (+182d) |  |  |
| RHD4CZ5L016LV3200 | Cable Laying of Low Voltage Cables for Low Voltage Network - (RD-L-16)-Z5-L016-LV | 2027-02-06 → 2027-08-07 (+182d) | 2027-02-07 → 2027-08-08 (+182d) |  |  |
| RHD4CZ5L016LV3300 | Warning tape and Backfill for Low Voltage Cables for Low Voltage Network - (RD-L-16)-Z5-L016-LV | 2027-02-08 → 2027-08-09 (+182d) | 2027-02-09 → 2027-08-10 (+182d) |  |  |
| RHD4CZ5L016LV3400 | Testing of Low Voltage Cables for Low Voltage Network - (RD-L-16)-Z5-L016-LV | 2027-02-10 → 2027-08-11 (+182d) | 2027-02-11 → 2027-08-12 (+182d) |  |  |
| 3883 | **RHD4-02-002-Z5-L016-Street Lighting Network - SL** | 2026-12-31 → 2027-06-22 (+173d) | 2027-04-11 → 2027-10-06 (+178d) |  |  |
| 3884 | **RHD4-02-002-L016-(SL)-Street Lighting duct banks** | 2026-12-31 → 2027-06-22 (+173d) | 2027-01-09 → 2027-06-30 (+172d) |  |  |
| RHD4CZ5L016SL2100 | Excavation of Duct Banks for Street Lighting Network - (RD-L-16)-Z5-L016-SL | 2026-12-31 → 2027-06-22 (+173d) | 2027-01-02 → 2027-06-23 (+172d) |  |  |
| RHD4CZ5L016SL2200 | Installation of Duct Banks for Street Lighting Network - (RD-L-16)-Z5-L016-SL | 2027-01-03 → 2027-06-24 (+172d) | 2027-01-04 → 2027-06-26 (+173d) |  |  |
| RHD4CZ5L016SL2300 | Pouring of Duct Banks for Street Lighting Network - (RD-L-16)-Z5-L016-SL | 2027-01-05 → 2027-06-27 (+173d) | 2027-01-06 → 2027-06-28 (+173d) |  |  |
| RHD4CZ5L016SL2400 | Backfilling of Duct Banks for Street Lighting Network - (RD-L-16)-Z5-L016-SL | 2027-01-07 → 2027-06-29 (+173d) | 2027-01-09 → 2027-06-30 (+172d) |  |  |
| 3885 | **RHD4-02-002-L016-(SL)-Street Lighting Drawpit** | 2027-02-13 → 2027-08-14 (+182d) | 2027-02-16 → 2027-08-17 (+182d) |  |  |
| RHD4CZ5L016SL5100 | Excavation of Drawpit size 600x600x900mm for Street Lighting Network - (RD-L-16)-Z5-L016-SL | 2027-02-13 → 2027-08-14 (+182d) | 2027-02-14 → 2027-08-15 (+182d) |  | resources Skilled labor [1.85 h]; Unskilled Labor [1.85 h]; Equipment Opreator [1.42 h]; Excavator-Poclain [0.76 h]; Dump Truck [0.76 h]; Drawpit with medium duty steel cover, size600x600x900mm, [0.3 Unit] → Skilled labor [1.85 h]; Unskilled Labor [1.85 h]; Equipment Opreator [1.42 h]; Excavator-Poclain [0.8 h]; Dump Truck [0.8 h]; Drawpit with medium duty steel cover, size600x600x900mm, [0.3 Unit] |
| RHD4CZ5L016SL5200 | Installation of Drawpit size 600x600x900mm for Street Lighting Network - (RD-L-16)-Z5-L016-SL | 2027-02-15 → 2027-08-16 (+182d) | 2027-02-16 → 2027-08-17 (+182d) |  | resources Skilled labor [1.85 h]; Unskilled Labor [1.85 h]; Equipment Opreator [0.76 h]; Boom Truck [0.76 h]; Drawpit with medium duty steel cover, size600x600x900mm, [1.7 Unit] → Skilled labor [1.85 h]; Unskilled Labor [1.85 h]; Equipment Opreator [0.8 h]; Boom Truck [0.8 h]; Drawpit with medium duty steel cover, size600x600x900mm, [1.7 Unit] |
| 3886 | **RHD4-02-002-L016-(SL)-Street Lighting cables** | 2027-02-17 → 2027-08-18 (+182d) | 2027-03-15 → 2027-09-08 (+177d) |  |  |
| RHD4CZ5L016SL3100 | Excavation for Street Lighting Cables for Street Lighting Network - (RD-L-16)-Z5-L016-SL | 2027-02-17 → 2027-08-18 (+182d) | 2027-02-24 → 2027-08-24 (+181d) |  |  |
| RHD4CZ5L016SL3200 | Cable Laying of Street Lighting Cables for Street Lighting Network - (RD-L-16)-Z5-L016-SL | 2027-02-25 → 2027-08-25 (+181d) | 2027-03-02 → 2027-08-30 (+181d) |  | resources Skilled labor [46.18 h]; Unskilled Labor [184.48 h]; Electrician [92.24 h]; Equipment Opreator [138.42 h]; Boom Truck [46.18 h]; Cable Laying Machine [92.24 h]; Cable, Copper 4x10mm2/ CU/XLPE/SWA/PVC + 1x10mm2 CU/PVC [762.47 m] → Skilled labor [46.18 h]; Unskilled Labor [184.48 h]; Electrician [92.24 h]; Equipment Opreator [138.4 h]; Boom Truck [46.18 h]; Cable Laying Machine [92.24 h]; Cable, Copper 4x10mm2/ CU/XLPE/SWA/PVC + 1x10mm2 CU/PVC [762.47 m] |
| RHD4CZ5L016SL3300 | Warning tape and Backfill for Street Lighting Cables for Street Lighting Network - (RD-L-16)-Z5-L016-SL | 2027-03-03 → 2027-08-31 (+181d) | 2027-03-08 → 2027-09-05 (+181d) |  |  |
| RHD4CZ5L016SL3400 | Testing of Street Lighting Cables for Street Lighting Network - (RD-L-16)-Z5-L016-SL | 2027-03-13 → 2027-09-06 (+177d) | 2027-03-15 → 2027-09-08 (+177d) |  |  |
| 3887 | **RHD4-02-002-L016-(SL)-Street Lighting Poles** | 2027-03-16 → 2027-09-09 (+177d) | 2027-04-11 → 2027-10-06 (+178d) |  |  |
| RHD4CZ5L016SL1100 | Excavation for RC Base for Lighting Poles for Street Lighting Network - (RD-L-16)-Z5-L016-SL | 2027-03-16 → 2027-09-09 (+177d) | 2027-03-20 → 2027-09-13 (+177d) |  |  |
| RHD4CZ5L016SL1200 | Installation for RC Base for Lighting Poles for Street Lighting Network - (RD-L-16)-Z5-L016-SL | 2027-03-21 → 2027-09-14 (+177d) | 2027-03-24 → 2027-09-18 (+178d) |  |  |
| RHD4CZ5L016SL1300 | Backfill for RC Base for Lighting Poles for Street Lighting Network - (RD-L-16)-Z5-L016-SL | 2027-03-25 → 2027-09-19 (+178d) | 2027-03-29 → 2027-09-22 (+177d) |  |  |
| RHD4CZ5L016SL1400 | Installation for Lighting Poles for Street Lighting Network - (RD-L-16)-Z5-L016-SL | 2027-03-30 → 2027-09-25 (+179d) | 2027-04-04 → 2027-09-29 (+178d) |  |  |
| RHD4CZ5L016SL1500 | Luminaire Installation for Lighting Poles for Street Lighting Network - (RD-L-16)-Z5-L016-SL | 2027-04-07 → 2027-10-03 (+179d) | 2027-04-11 → 2027-10-06 (+178d) |  |  |
| 3889 | **RHD4-02-002-L016-(SL)-Street Lighting Earthing System** | 2027-04-05 → 2027-09-30 (+178d) | 2027-04-06 → 2027-10-02 (+179d) |  |  |
| RHD4CZ5L016SL6100 | Installation of Earthing for Lighting Poles and Fedder Pillers for Street Lighting Network - (RD-L-16)-Z5-L016-SL | 2027-04-05 → 2027-09-30 (+178d) | 2027-04-06 → 2027-10-02 (+179d) |  |  |
| 3895 | **RHD4-02-002-Z5-L016-Telecommunications Network - TC** | 2026-07-30 → 2027-02-01 (+186d) | 2027-05-22 → 2027-11-11 (+173d) |  |  |
| 3896 | **RHD4-02-002-L016-(TC)-Telecommunications Ducts** | 2027-04-12 → 2027-10-07 (+178d) | 2027-05-22 → 2027-11-11 (+173d) |  |  |
| RHD4CZ5L016TC2100 | Excavation of HDPE Ducts for Telecom Network - (RD-L-16)-Z5-L016-TC | 2027-04-12 → 2027-10-07 (+178d) | 2027-04-21 → 2027-10-17 (+179d) |  |  |
| RHD4CZ5L016TC2200 | Installation of HDPE Ducts for Telecom Network - (RD-L-16)-Z5-L016-TC | 2027-04-22 → 2027-10-18 (+179d) | 2027-05-06 → 2027-11-01 (+179d) |  | resources Carpenter [13.61 h]; Skilled labor [136.56 h]; Unskilled Labor [136.56 h]; Steel Fixer [13.61 h]; (6*50mm) HDPE ducts -TC [513.24 m]; (6*50mm+2*32mm) HDPE ducts -TC [221.32 m]; (6*50mm+4*32mm) HDPE ducts -TC [51.16 m]; (2*32mm) HDPE ducts -TC [29.64 m] → Carpenter [13.6 h]; Skilled labor [136.56 h]; Unskilled Labor [136.56 h]; Steel Fixer [13.6 h]; (6*50mm) HDPE ducts -TC [513.24 m]; (6*50mm+2*32mm) HDPE ducts -TC [221.32 m]; (6*50mm+4*32mm) HDPE ducts -TC [51.16 m]; (2*32mm) HDPE ducts -TC [29.64 m] |
| RHD4CZ5L016TC2400 | Backfilling of HDPE Ducts for Telecom Network - (RD-L-16)-Z5-L016-TC | 2027-05-08 → 2027-11-02 (+178d) | 2027-05-22 → 2027-11-11 (+173d) |  |  |
| 3897 | **RHD4-02-002-L016-(TC)-Telecommunications Manholes** | 2027-04-22 → 2027-10-18 (+179d) | 2027-05-01 → 2027-10-26 (+178d) |  |  |
| RHD4CZ5L016TC5100 | Excavation for Manholes for Telecom Network - (RD-L-16)-Z5-L016-TC | 2027-04-22 → 2027-10-18 (+179d) | 2027-04-26 → 2027-10-21 (+178d) |  | resources Skilled labor [13.61 h]; Unskilled Labor [13.61 h]; Equipment Opreator [10.89 h]; Excavator-Poclain [5.45 h]; Dump Truck [5.45 h]; Manhole Type 1 - TC [0.9 nr]; Manhole Type 2 - TC [0.3 nr] → Skilled labor [13.6 h]; Unskilled Labor [13.6 h]; Equipment Opreator [10.89 h]; Excavator-Poclain [5.45 h]; Dump Truck [5.45 h]; Manhole Type 1 - TC [0.9 nr]; Manhole Type 2 - TC [0.3 nr] |
| RHD4CZ5L016TC5200 | Installation of Manholes for Telecom Network - (RD-L-16)-Z5-L016-TC | 2027-04-27 → 2027-10-23 (+179d) | 2027-05-01 → 2027-10-26 (+178d) |  | resources Skilled labor [13.61 h]; Unskilled Labor [13.61 h]; Equipment Opreator [5.45 h]; Boom Truck [5.45 h]; Manhole Type 1 - TC [5.1 nr]; Manhole Type 2 - TC [1.7 nr] → Skilled labor [13.6 h]; Unskilled Labor [13.6 h]; Equipment Opreator [5.45 h]; Boom Truck [5.45 h]; Manhole Type 1 - TC [5.1 nr]; Manhole Type 2 - TC [1.7 nr] |
| 3898 | **RHD4-02-002-L016-(TC)-Telecomminications Road Crossings** | 2026-07-30 → 2027-02-01 (+186d) | 2026-08-08 → 2027-02-09 (+185d) |  |  |
| RHD4CZ5L016TC3100 | Excavation for Road Crossings for Telecom Network - (RD-L-16)-Z5-L016-TC | 2026-07-30 → 2027-02-01 (+186d) | 2026-08-01 → 2027-02-02 (+185d) |  |  |
| RHD4CZ5L016TC3200 | Installation of Road Crossings for Telecom Network - (RD-L-16)-Z5-L016-TC | 2026-08-02 → 2027-02-03 (+185d) | 2026-08-03 → 2027-02-04 (+185d) |  |  |
| RHD4CZ5L016TC3300 | Pouring of Road Crossings for Telecom Network - (RD-L-16)-Z5-L016-TC | 2026-08-04 → 2027-02-06 (+186d) | 2026-08-05 → 2027-02-07 (+186d) |  | resources Skilled labor [12.09 h]; Unskilled Labor [12.09 h]; Equipment Opreator [4.79 h]; Concrete Mixer Truck [2.4 h]; Concrete Pump [2.4 h]; Road crossing ducts, (6*50mm) HDPE -TC [10.79 m] → Skilled labor [12.09 h]; Unskilled Labor [12.09 h]; Equipment Opreator [4.8 h]; Concrete Mixer Truck [2.4 h]; Concrete Pump [2.4 h]; Road crossing ducts, (6*50mm) HDPE -TC [10.79 m] |
| RHD4CZ5L016TC3400 | Backfilling of Road Crossings for Telecom Network - (RD-L-16)-Z5-L016-TC | 2026-08-06 → 2027-02-08 (+186d) | 2026-08-08 → 2027-02-09 (+185d) |  |  |
| 3899 | **RHD4-02-002-Z5-L016-Information and Communication Technologies - ICT** | 2026-08-02 → 2027-02-03 (+185d) | 2027-07-07 → 2027-12-28 (+174d) |  |  |
| 3900 | **RHD4-02-002-L016-(ICT)-Information and Communication Technologies Ducts** | 2027-05-23 → 2027-11-13 (+174d) | 2027-06-28 → 2027-12-19 (+174d) |  |  |
| RHD4CZ5L016ICT2100 | Excavation of HDPE Ducts for ICT Network - (RD-L-16)-Z5-L016-ICT | 2027-05-23 → 2027-11-13 (+174d) | 2027-06-01 → 2027-11-22 (+174d) |  |  |
| RHD4CZ5L016ICT2200 | Installation of HDPE Ducts for ICT Network - (RD-L-16)-Z5-L016-ICT | 2027-06-02 → 2027-11-23 (+174d) | 2027-06-17 → 2027-12-08 (+174d) |  |  |
| RHD4CZ5L016ICT2400 | Backfilling of HDPE Ducts for ICT Network - (RD-L-16)-Z5-L016-ICT | 2027-06-19 → 2027-12-09 (+173d) | 2027-06-28 → 2027-12-19 (+174d) |  |  |
| 3901 | **RHD4-02-002-L016-(ICT)-Information and Communication Technologies Manholes** | 2027-06-29 → 2027-12-20 (+174d) | 2027-07-07 → 2027-12-28 (+174d) |  |  |
| RHD4CZ5L016ICT5100 | Excavation for Manholes for ICT Network - (RD-L-16)-Z5-L016-ICT | 2027-06-29 → 2027-12-20 (+174d) | 2027-07-03 → 2027-12-23 (+173d) |  | resources Skilled labor [13.61 h]; Unskilled Labor [13.61 h]; Equipment Opreator [10.89 h]; Excavator-Poclain [5.45 h]; Dump Truck [5.45 h]; Manhole Type 1 - ICT [0.9 nr]; Manhole Type 2 - ICT [0.3 nr] → Skilled labor [13.6 h]; Unskilled Labor [13.6 h]; Equipment Opreator [10.89 h]; Excavator-Poclain [5.45 h]; Dump Truck [5.45 h]; Manhole Type 1 - ICT [0.9 nr]; Manhole Type 2 - ICT [0.3 nr] |
| RHD4CZ5L016ICT5200 | Installation of Manholes for ICT Network - (RD-L-16)-Z5-L016-ICT | 2027-07-04 → 2027-12-25 (+174d) | 2027-07-07 → 2027-12-28 (+174d) |  | resources Skilled labor [13.61 h]; Unskilled Labor [13.61 h]; Equipment Opreator [5.45 h]; Boom Truck [5.45 h]; Manhole Type 1 - ICT [5.1 nr]; Manhole Type 2 - ICT [1.7 nr] → Skilled labor [13.6 h]; Unskilled Labor [13.6 h]; Equipment Opreator [5.45 h]; Boom Truck [5.45 h]; Manhole Type 1 - ICT [5.1 nr]; Manhole Type 2 - ICT [1.7 nr] |
| 3902 | **RHD4-02-002-L016-(ICT)-Information and Communication Technologies Road Crossings** | 2026-08-02 → 2027-02-03 (+185d) | 2026-08-23 → 2027-02-27 (+188d) |  |  |
| RHD4CZ5L016ICT3100 | Excavation for Road Crossings for ICT Network - (RD-L-16)-Z5-L016-ICT | 2026-08-02 → 2027-02-03 (+185d) | 2026-08-03 → 2027-02-04 (+185d) |  |  |
| RHD4CZ5L016ICT3200 | Installation of Road Crossings for ICT Network - (RD-L-16)-Z5-L016-ICT | 2026-08-17 → 2027-02-20 (+187d) | 2026-08-18 → 2027-02-21 (+187d) |  |  |

| ID | Task | Start | Finish | Duration | Complete | Predecessors | Other |
| --- | --- | --- | --- | --- | --- | --- | --- |
| RHD4CZ5L016ICT3300 | Pouring of Road Crossings for ICT Network - (RD-L-16)-Z5-L016-ICT | 2026-08-19 → 2027-02-23 (+188d) | 2026-08-20 → 2027-02-24 (+188d) |  |  |  |  |
| RHD4CZ5L016ICT3400 | Backfilling of Road Crossings for ICT Network - (RD-L-16)-Z5-L016-ICT | 2026-08-22 → 2027-02-25 (+187d) | 2026-08-23 → 2027-02-27 (+188d) |  |  |  |  |
| 3903 | **RHD4-02-002-Z5-L016-Security Network - CCTV** | 2027-07-08 → 2027-12-29 (+174d) | 2027-08-19 → 2028-02-09 (+174d) |  |  |  |  |
| 3904 | **RHD4-02-002-L016-(CCTV)-Civil Works** | 2027-07-08 → 2027-12-29 (+174d) | 2027-07-19 → 2028-01-09 (+174d) |  |  |  |  |
| RHD4CZ5L016CCTV2100 | Civil Works for Security Network - (RD-L-16)-Z5-L016-CCTV | 2027-07-08 → 2027-12-29 (+174d) | 2027-07-19 → 2028-01-09 (+174d) |  |  |  |  |
| 3905 | **RHD4-02-002-L016-(CCTV)-CCTV Poles** | 2027-07-20 → 2028-01-10 (+174d) | 2027-07-31 → 2028-01-20 (+173d) |  |  |  |  |
| RHD4CZ5L016CCTV1100 | Excavation for RC Base for CCTV Poles for Security Network - (RD-L-16)-Z5-L016-CCTV | 2027-07-20 → 2028-01-10 (+174d) | 2027-07-21 → 2028-01-11 (+174d) |  |  |  |  |
| RHD4CZ5L016CCTV1200 | Installation for RC Base for CCTV Poles for Security Network - (RD-L-16)-Z5-L016-CCTV | 2027-07-22 → 2028-01-12 (+174d) | 2027-07-24 → 2028-01-13 (+173d) |  |  |  |  |
| RHD4CZ5L016CCTV1300 | Backfill for RC Base for CCTV Poles for Security Network - (RD-L-16)-Z5-L016-CCTV | 2027-07-25 → 2028-01-15 (+174d) | 2027-07-26 → 2028-01-16 (+174d) |  |  |  |  |
| RHD4CZ5L016CCTV1400 | Installation for CCTV Poles for Security Network - (RD-L-16)-Z5-L016-CCTV | 2027-07-27 → 2028-01-17 (+174d) | 2027-07-28 → 2028-01-18 (+174d) |  |  |  |  |
| RHD4CZ5L016CCTV1500 | Protection post Installation for CCTV Poles for Security Network - (RD-L-16)-Z5-L016-CCTV | 2027-07-29 → 2028-01-19 (+174d) | 2027-07-31 → 2028-01-20 (+173d) |  |  |  |  |
| 3906 | **RHD4-02-002-L016-(CCTV)-Camera** | 2027-08-01 → 2028-01-22 (+174d) | 2027-08-02 → 2028-01-23 (+174d) |  |  |  |  |
| RHD4CZ5L016CCTV3100 | Installation for Cameras for Security Network - (RD-L-16)-Z5-L016-CCTV | 2027-08-01 → 2028-01-22 (+174d) | 2027-08-02 → 2028-01-23 (+174d) |  |  |  |  |
| 3907 | **RHD4-02-002-L016-(CCTV)-Power and Infrastructure** | 2027-07-29 → 2028-01-19 (+174d) | 2027-08-02 → 2028-01-23 (+174d) |  |  |  |  |
| RHD4CZ5L016CCTV4100 | Installation of Power outlet, UPS and midspan for PTZ Camerafor Cameras for Security Network - (RD-L-16)-Z5-L016-CCTV | 2027-07-29 → 2028-01-19 (+174d) | 2027-07-31 → 2028-01-20 (+173d) |  |  |  |  |
| RHD4CZ5L016CCTV4200 | Short Range Wireless PoP wireless Bridgefor CCTV Poles for Security Network - (RD-L-16)-Z5-L016-CCTV | 2027-08-01 → 2028-01-22 (+174d) | 2027-08-02 → 2028-01-23 (+174d) |  |  |  |  |
| 3909 | **RHD4-02-002-L016-(CCTV)-CCTV Panels and Components** | 2027-08-03 → 2028-01-24 (+174d) | 2027-08-19 → 2028-02-09 (+174d) |  |  |  |  |
| RHD4CZ5L016CCTV6100 | Installation for CCTV Panels for Security Network - (RD-L-16)-Z5-L016-CCTV | 2027-08-03 → 2028-01-24 (+174d) | 2027-08-19 → 2028-02-09 (+174d) |  |  |  |  |
| 3542 | **RHD4-02-002-Z5-A014** | 2026-06-13 → 2026-06-09 (-4d) | 2027-09-30 → 2028-03-27 (+179d) |  |  |  |  |
| 3721 | **RHD4-02-002-Z5-A014-Road Works - RD** | 2026-06-28 → 2026-06-09 (-19d) | 2027-09-30 → 2028-03-27 (+179d) |  |  |  |  |
| 3722 | **RHD4-02-002-A014-(RD)-Subgrade** | 2026-06-28 → 2026-06-09 (-19d) | 2026-07-02 → 2026-06-23 (-9d) |  |  |  |  |
| RHD4CZ5A014RD1100 | Supply, lay and compaction subgrade compacted thickness 300 mm for Roads - (RD-A-1 /4)-Z5-A014-RD | 2026-06-28 → 2026-06-09 A (-19d) | 2026-07-02 → 2026-06-23 A (-9d) |  | 0% → 100% |  |  |
| 3723 | **RHD4-02-002-A014-(RD)-Aggregate Base Course** | 2026-07-04 → 2026-09-21 (+79d) | 2026-07-09 → 2026-10-03 (+86d) |  |  |  |  |
| RHD4CZ5A014RD2100 | Supply, lay and compaction Aggregate base course compacted thickness 300 mmfor Roads - (RD-A-1 /4)-Z5-A014-RD | 2026-07-04 → 2026-09-21 A (+79d) | 2026-07-09 → 2026-10-03 A (+86d) |  | 0% → 100% |  | resources Skilled labor [73.62 h]; Unskilled Labor [147.35 h]; Equipment Opreator [932.65 h]; Water Truck [48.57 h]; Roller compactor [147.35 h]; Grader [147.35 h]; Dump Truck [589.39 h]; Aggregate Base Courses [6008.62 m3] → Skilled labor [73.6 h]; Unskilled Labor [147.35 h]; Equipment Opreator [932.65 h]; Water Truck [48.57 h]; Roller compactor [147.35 h]; Grader [147.35 h]; Dump Truck [589.39 h]; Aggregate Base Courses [6008.62 m3] |
| 3724 | **RHD4-02-002-A014-(RD)-Bituminous base course Two Layers, including (MC1)&(RC2)** | 2026-07-11 → 2026-10-20 (+101d) | 2027-09-06 → 2028-02-21 (+168d) |  |  |  |  |
| RHD4CZ5A014RD3100 | Supply, lay and Asphaltic base course including Prime Coat (MC1) for 1st Layer - (RD-A-1 /4)-Z5-A014-RD | 2026-07-11 → 2026-10-20 A (+101d) | 2026-07-13 → 2027-01-21 (+192d) | 3d → 7d | 0% → 85% |  | resources Skilled labor [74.27 h]; Unskilled Labor [445.85 h]; Equipment Opreator [1114.63 h]; Bobcat [74.27 h]; Roller compactor [74.27 h]; Asphalt Paver [74.27 h]; Rubber Compactor [148.65 h]; MC1/RC2 Sprinkler [74.27 h]; Dump Truck [668.78 h]; Bituminous base course (Grading I - Class A), including Prime coat (MC1) & tack coate (RC2) [2718.72 m3] → Skilled labor [74.27 h]; Unskilled Labor [445.85 h]; Equipment Opreator [1114.63 h]; Bobcat [74.27 h]; Roller compactor [74.27 h]; Asphalt Paver [74.27 h]; Rubber Compactor [148.65 h]; MC1/RC2 Sprinkler [74.27 h]; Dump Truck [668.8 h]; Bituminous base course (Grading I - Class A), including Prime coat (MC1) & tack coate (RC2) [2718.72 m3] |
| RHD4CZ5A014RD3200 | Supply, lay and Asphaltic base course including Tack Coat (RC2) for 2nd Layer - (RD-A-1 /4)-Z5-A014-RD | 2027-08-30 → 2028-02-14 (+168d) | 2027-09-06 → 2028-02-21 (+168d) |  |  |  | resources Skilled labor [74.27 h]; Unskilled Labor [445.85 h]; Equipment Opreator [1114.63 h]; Bobcat [74.27 h]; Roller compactor [74.27 h]; Asphalt Paver [74.27 h]; Rubber Compactor [148.65 h]; MC1/RC2 Sprinkler [74.27 h]; Dump Truck [668.78 h]; Bituminous base course (Grading I - Class A), including Prime coat (MC1) & tack coate (RC2) [2718.72 m3] → Skilled labor [74.27 h]; Unskilled Labor [445.85 h]; Equipment Opreator [1114.63 h]; Bobcat [74.27 h]; Roller compactor [74.27 h]; Asphalt Paver [74.27 h]; Rubber Compactor [148.65 h]; MC1/RC2 Sprinkler [74.27 h]; Dump Truck [668.8 h]; Bituminous base course (Grading I - Class A), including Prime coat (MC1) & tack coate (RC2) [2718.72 m3] |
| 3726 | **RHD4-02-002-A014-(RD)-Precast Concrete Curb** | 2027-09-07 → 2028-02-23 (+169d) | 2027-09-16 → 2028-03-07 (+173d) |  |  |  |  |
| RHD4CZ5A014RD5100 | Supply and installation Precast Concrete Kerb for Roads - (RD-A-1 /4)-Z5-A014-RD | 2027-09-07 → 2028-02-23 (+169d) | 2027-09-16 → 2028-03-07 (+173d) |  |  |  | resources Mason [283.26 h]; Skilled labor [94.42 h]; Unskilled Labor [283.26 h]; Equipment Opreator [188.84 h]; Bobcat [94.42 h]; Concrete Mixer Truck [94.42 h]; Precast Concrete Curbstone, type K1 [3901.79 m] → Mason [283.26 h]; Skilled labor [94.4 h]; Unskilled Labor [283.26 h]; Equipment Opreator [188.8 h]; Bobcat [94.4 h]; Concrete Mixer Truck [94.4 h]; Precast Concrete Curbstone, type K1 [3901.79 m] |
| 3729 | **RHD4-02-002-A014-(RD)-Traffic Signage** | 2027-09-18 → 2028-03-08 (+172d) | 2027-09-26 → 2028-03-15 (+171d) |  |  |  |  |
| RHD4CZ5A014RD8100 | Installation of Traffic Signage for Road Network - (RD-A-1 /4)-Z5-A014-RD | 2027-09-18 → 2028-03-08 (+172d) | 2027-09-26 → 2028-03-15 (+171d) |  |  |  |  |
| 3725 | **RHD4-02-002-A014-(RD)-Bituminous concrete wearing course including tack coat (RC2)** | 2027-09-18 → 2028-03-11 (+175d) | 2027-09-20 → 2028-03-13 (+175d) |  |  |  |  |
| RHD4CZ5A014RD4100 | Supply, lay and compaction Asphaltic wearing course including tack Coat (RC2)for Road Network - (RD-A-1 /4)-Z5-A014-RD | 2027-09-18 → 2028-03-11 (+175d) | 2027-09-20 → 2028-03-13 (+175d) |  |  |  | resources Skilled labor [30.17 h]; Unskilled Labor [180.78 h]; Equipment Opreator [452.06 h]; Bobcat [30.17 h]; Roller compactor [30.17 h]; Asphalt Paver [30.17 h]; Rubber Compactor [60.22 h]; MC1/RC2 Sprinkler [30.17 h]; Dump Truck [271.28 h]; Bituminous concrete wearing course, (Grading I - Class A), including tack coat (RC2) [1437.37 m3] → Skilled labor [30.17 h]; Unskilled Labor [180.8 h]; Equipment Opreator [452.06 h]; Bobcat [30.17 h]; Roller compactor [30.17 h]; Asphalt Paver [30.17 h]; Rubber Compactor [60.22 h]; MC1/RC2 Sprinkler [30.17 h]; Dump Truck [271.28 h]; Bituminous concrete wearing course, (Grading I - Class A), including tack coat (RC2) [1437.37 m3] |
| 3728 | **RHD4-02-002-A014-(RD)-Pavement Marking** | 2027-09-21 → 2028-03-19 (+180d) | 2027-09-30 → 2028-03-27 (+179d) |  |  |  |  |
| RHD4CZ5A014RD7100 | Pavement Markings for Road Network - (RD-A-1 /4)-Z5-A014-RD | 2027-09-21 → 2028-03-19 (+180d) | 2027-09-30 → 2028-03-27 (+179d) |  |  |  |  |
| 3546 | **RHD4-02-002-Z5-A014-Storm Network - ST** |  | 2026-08-09 → 2027-02-06 (+181d) |  |  |  |  |
| 2039 | **RHD4-02-002-A014-(ST)-GRP Pipes - 1000 mm diameter** |  | 2026-06-27 → 2027-01-13 (+200d) |  |  |  |  |
| RHD4CZ5A014ST1106 | Excavation works for GRP Pipe Line 1000 mm - (RD-A-1 /4)-Z5-A014-ST | 2026-06-16 A | 2026-06-17 → 2026-08-05 A (+49d) |  | 0% → 100% |  |  |
| RHD4CZ5A014ST1206 | Bedding works for GRP Pipe Line 1000 mm - (RD-A-1 /4)-Z5-A014-ST | 2026-06-18 A | 2026-06-20 → 2026-08-06 A (+47d) |  | 0% → 100% |  |  |
| RHD4CZ5A014ST1306 | Installing for GRP Pipe Line 1000 mm - (RD-A-1 /4)-Z5-A014-ST | 2026-06-21 A | 2026-06-22 → 2026-08-09 A (+48d) |  | 0% → 100% |  | resources Unskilled Labor [1.63 h]; Plumber [0.87 h]; GRP (1000mm Diameter) - ST - Depth: 1.51m - 2.5m [9.07 m] → Unskilled Labor [1.6 h]; Plumber [0.87 h]; GRP (1000mm Diameter) - ST - Depth: 1.51m - 2.5m [9.07 m] |
| RHD4CZ5A014ST1506 | Backfilling and warning tape works for GRP Pipe Line 1000 mm - (RD-A-1 /4)-Z5-A014-ST | 2026-06-25 A | 2026-06-27 → 2026-09-12 A (+77d) |  | 0% → 100% |  |  |
| RHD4CZ5A014ST1406 | Primary Test for GRP Pipe Line 1000 mm - (RD-A-1 /4)-Z5-A014-ST | 2026-06-23 → 2027-01-12 (+203d) | 2026-06-24 → 2027-01-13 (+203d) |  |  |  |  |
| 2416 | **RHD4-02-002-A014-(ST)-GRP Pipes - 800 mm diameter** |  | 2026-06-29 → 2027-01-13 (+198d) |  |  |  |  |
| RHD4CZ5A014ST1104 | Excavation works for GRP Pipe Line 800 mm - (RD-A-1 /4)-Z5-A014-ST | 2026-06-18 A | 2026-06-20 → 2026-08-06 A (+47d) |  | 0% → 100% |  |  |
| RHD4CZ5A014ST1204 | Bedding works for GRP Pipe Line 800 mm - (RD-A-1 /4)-Z5-A014-ST | 2026-06-21 A | 2026-06-22 → 2026-08-08 A (+47d) |  | 0% → 100% |  |  |
| RHD4CZ5A014ST1304 | Installing for GRP Pipe Line 800 mm - (RD-A-1 /4)-Z5-A014-ST | 2026-06-23 A | 2026-06-24 → 2026-08-10 A (+47d) |  | 0% → 100% |  |  |
| RHD4CZ5A014ST1504 | Backfilling and warning tape works for GRP Pipe Line 800 mm - (RD-A-1 /4)-Z5-A014-ST | 2026-06-28 A | 2026-06-29 → 2026-08-12 A (+44d) |  | 0% → 100% |  |  |
| RHD4CZ5A014ST1404 | Primary Test for GRP Pipe Line 800 mm - (RD-A-1 /4)-Z5-A014-ST | 2026-06-25 → 2027-01-12 (+201d) | 2026-06-27 → 2027-01-13 (+200d) |  |  |  |  |
| 3565 | **RHD4-02-002-A014-(ST)-MH Works - 2000 mm diameter** |  | 2026-06-30 → 2027-01-17 (+201d) |  |  |  |  |
| RHD4CZ5A014ST3102 | Excavation and PC Blinding works for MH 2000 mm - (RD-A-1 /4)-Z5-A014-ST | 2026-06-13 A | 2026-06-15 → 2026-08-31 A (+77d) |  | 0% → 100% | RHD4ENSDZ5APPST110, RHD4ENMSST2000, RHD4PRSHLDOSST1003 SS, RHD4PRSHLSTAGPT1300, RHD4PRLOLSTAGMV1601, RHD4PRLOLSTAGMV1602 → RHD4ENSDZ5APPST110, RHD4ENMSST2000, RHD4PRSHLDOSST1003 SS, RHD4PRSHLSTAGPT1300 | resources Skilled labor [27.23 h]; Unskilled Labor [27.23 h]; Equipment Opreator [43.56 h]; Excavator-Poclain [27.23 h]; Water Truck [2.72 h]; Dump Truck [13.61 h]; MH (2000mm Diameter) - ST - depth 1.50 - 2.5m [0.25 nr]; MH (2000mm Diameter) - ST - depth 2.51 - 3.5m [0.5 nr]; MH (2000mm Diameter) - ST - depth 3.51 -4.5m [0.5 nr]; MH (2000mm Diameter) - ST - depth 4.51 -5.5m [0.25 nr] → Skilled labor [27.2 h]; Unskilled Labor [27.2 h]; Equipment Opreator [43.56 h]; Excavator-Poclain [27.2 h]; Water Truck [2.72 h]; Dump Truck [13.6 h]; MH (2000mm Diameter) - ST - depth 1.50 - 2.5m [0.25 nr]; MH (2000mm Diameter) - ST - depth 2.51 - 3.5m [0.5 nr]; MH (2000mm Diameter) - ST - depth 3.51 -4.5m [0.5 nr]; MH (2000mm Diameter) - ST - depth 4.51 -5.5m [0.25 nr] |
| RHD4CZ5A014ST3202 | Installation of Base for MH 2000 mm - (RD-A-1 /4)-Z5-A014-ST | 2026-06-16 → 2026-08-06 A (+51d) | 2026-06-20 → 2026-08-20 A (+61d) |  | 0% → 100% |  |  |
| RHD4CZ5A014ST3302 | MH Ring and C.Slab works and Backfilling works for MH 2000 mm - (RD-A-1 /4)-Z5-A014-ST | 2026-06-21 → 2026-09-05 A (+76d) | 2026-06-24 → 2026-09-23 A (+91d) |  | 0% → 100% |  |  |
| RHD4CZ5A014ST3402 | Steel Cover for MH 2000 mm - (RD-A-1 /4)-Z5-A014-ST | 2026-06-25 → 2027-01-12 (+201d) | 2026-06-27 → 2027-01-13 (+200d) |  |  |  |  |
| RHD4CZ5A014ST3502 | Finishing, Benching, Testing works for MH 2000 mm - (RD-A-1 /4)-Z5-A014-ST | 2026-06-28 → 2027-01-14 (+200d) | 2026-06-30 → 2027-01-17 (+201d) |  |  |  | resources Skilled labor [27.23 h]; Unskilled Labor [54.45 h]; Plumber [27.23 h]; Equipment Opreator [5.45 h]; Water Truck [5.45 h]; MH (2000mm Diameter) - ST - depth 1.50 - 2.5m [0.1 nr]; MH (2000mm Diameter) - ST - depth 2.51 - 3.5m [0.2 nr]; MH (2000mm Diameter) - ST - depth 3.51 -4.5m [0.2 nr]; MH (2000mm Diameter) - ST - depth 4.51 -5.5m [0.1 nr] → Skilled labor [27.2 h]; Unskilled Labor [54.45 h]; Plumber [27.2 h]; Equipment Opreator [5.45 h]; Water Truck [5.45 h]; MH (2000mm Diameter) - ST - depth 1.50 - 2.5m [0.1 nr]; MH (2000mm Diameter) - ST - depth 2.51 - 3.5m [0.2 nr]; MH (2000mm Diameter) - ST - depth 3.51 -4.5m [0.2 nr]; MH (2000mm Diameter) - ST - depth 4.51 -5.5m [0.1 nr] |
| 3564 | **RHD4-02-002-A014-(ST)-MH Works - 1500 mm diameter** |  | 2026-07-12 → 2027-01-23 (+195d) |  |  |  |  |
| RHD4CZ5A014ST3101 | Excavation and PC Blinding works for MH 1500 mm - (RD-A-1 /4)-Z5-A014-ST | 2026-06-16 A | 2026-06-21 → 2026-08-06 A (+46d) |  | 0% → 100% | RHD4CZ5A014ST3102, RHD4ENSDZ5APPST110, RHD4ENMSST2000, RHD4PRLOLSTAGLFS1400 → RHD4ENSDZ5APPST110, RHD4ENMSST2000, RHD4CZ5A014ST3102 | resources Skilled labor [49.01 h]; Unskilled Labor [49.01 h]; Equipment Opreator [78.41 h]; Excavator-Poclain [49.01 h]; Water Truck [4.9 h]; Dump Truck [24.5 h]; MH (1500mm Diameter) - ST - depth 1.50 - 2.5m [1.25 nr]; MH (1500mm Diameter) - ST - depth 2.51 - 3.5m [0.5 nr]; MH (1500mm Diameter) - ST - depth 3.51 - 4.5m [0.25 nr] → Skilled labor [49.01 h]; Unskilled Labor [49.01 h]; Equipment Opreator [78.4 h]; Excavator-Poclain [49.01 h]; Water Truck [4.9 h]; Dump Truck [24.5 h]; MH (1500mm Diameter) - ST - depth 1.50 - 2.5m [1.25 nr]; MH (1500mm Diameter) - ST - depth 2.51 - 3.5m [0.5 nr]; MH (1500mm Diameter) - ST - depth 3.51 - 4.5m [0.25 nr] |
| RHD4CZ5A014ST3201 | Installation of Base for MH 1500 mm - (RD-A-1 /4)-Z5-A014-ST | 2026-06-22 A | 2026-06-27 → 2026-09-09 A (+74d) |  | 0% → 100% |  |  |
| RHD4CZ5A014ST3301 | MH Ring and C.Slab works and Backfilling works for MH 1500 mm - (RD-A-1 /4)-Z5-A014-ST | 2026-06-28 A | 2026-07-02 → 2026-09-09 A (+69d) |  | 0% → 100% |  |  |
| RHD4CZ5A014ST3401 | Steel Cover for MH 1500 mm - (RD-A-1 /4)-Z5-A014-ST | 2026-07-04 → 2027-01-14 (+194d) | 2026-07-06 → 2027-01-17 (+195d) |  |  |  |  |
| RHD4CZ5A014ST3501 | Finishing, Benching, Testing works for MH 1500 mm - (RD-A-1 /4)-Z5-A014-ST | 2026-07-07 → 2027-01-18 (+195d) | 2026-07-12 → 2027-01-23 (+195d) |  |  |  |  |
| 3563 | **RHD4-02-002-A014-(ST)-MH Works - 1200 mm diameter** | 2026-06-22 → 2026-08-04 (+43d) | 2026-07-11 → 2027-01-27 (+200d) |  |  |  |  |
| RHD4CZ5A014ST3100 | Excavation and PC Blinding works for MH 1200 mm - (RD-A-1 /4)-Z5-A014-ST | 2026-06-22 → 2026-08-04 A (+43d) | 2026-06-25 → 2027-01-21 (+210d) |  | 0% → 82% |  |  |
| RHD4CZ5A014ST3200 | Installation of Base for MH 1200 mm - (RD-A-1 /4)-Z5-A014-ST | 2026-06-27 → 2026-08-29 A (+63d) | 2026-06-30 → 2026-09-05 A (+67d) |  | 0% → 100% | RHD4CZ5A014ST3100, RHD4PRSHLSTAGST1604, RHD4PRLOLSTAGLFS2000, RHD4PRLOLSTAGLFS1000, RHD4PRLOLSTAGLFS1200, RHD4PRLOLSTAGLFS1500, RHD4CZ6A015RW3000, RHD4PRSHLSTAGLV1400 → RHD4PRSHLSTAGST1604, RHD4CZ6A015RW3000, RHD4PRSHLSTAGLV1400, RHD4CZ5A014ST3100 |  |
| RHD4CZ5A014ST3300 | MH Ring and C.Slab works and Backfilling works for MH 1200 mm - (RD-A-1 /4)-Z5-A014-ST | 2026-07-01 → 2026-10-01 A (+92d) | 2026-07-05 → 2026-10-05 A (+92d) |  | 0% → 100% |  |  |
| RHD4CZ5A014ST3500 | Finishing, Benching, Testing works for MH 1200 mm - (RD-A-1 /4)-Z5-A014-ST | 2026-07-01 → 2027-01-18 (+201d) | 2026-07-05 → 2027-01-21 (+200d) |  |  |  |  |
| RHD4CZ5A014ST3400 | Steel Cover for MH 1200 mm - (RD-A-1 /4)-Z5-A014-ST | 2026-07-07 → 2027-01-24 (+201d) | 2026-07-11 → 2027-01-27 (+200d) |  |  |  |  |
| 3558 | **RHD4-02-002-A014-(ST)-GRP Pipes - 1500 mm diameter** |  | 2026-07-12 → 2027-01-25 (+197d) |  |  |  |  |
| RHD4CZ5A014ST1111 | Excavation works for GRP Pipe Line 1500 mm - (RD-A-1 /4)-Z5-A014-ST | 2026-07-01 A | 2026-07-02 → 2026-09-04 A (+64d) |  | 0% → 100% |  |  |
| RHD4CZ5A014ST1211 | Bedding works for GRP Pipe Line 1500 mm - (RD-A-1 /4)-Z5-A014-ST | 2026-07-04 A | 2026-07-05 → 2026-09-06 A (+63d) |  | 0% → 100% |  |  |
| RHD4CZ5A014ST1311 | Installing for GRP Pipe Line 1500 mm - (RD-A-1 /4)-Z5-A014-ST | 2026-07-06 A | 2026-07-07 → 2026-09-07 A (+62d) |  | 0% → 100% |  |  |

| ID | Task | Start | Finish | Complete | Other |
| --- | --- | --- | --- | --- | --- |
| RHD4CZ5A014ST1511 | Backfilling and warning tape works for GRP Pipe Line 1500 mm - (RD-A-1 /4)-Z5-A014-ST | 2026-07-11 A | 2026-07-12 → 2026-09-08 A (+58d) | 0% → 100% |  |
| RHD4CZ5A014ST1411 | Primary Test for GRP Pipe Line 1500 mm - (RD-A-1 /4)-Z5-A014-ST | 2026-07-08 → 2027-01-24 (+200d) | 2026-07-09 → 2027-01-25 (+200d) |  |  |
| 3550 | **RHD4-02-002-A014-(ST)-GRP Pipes - 700 mm diameter** |  | 2026-07-18 → 2027-01-25 (+191d) |  |  |
| RHD4CZ5A014ST1103 | Excavation works for GRP Pipe Line 700 mm - (RD-A-1 /4)-Z5-A014-ST | 2026-07-04 A | 2026-07-06 → 2026-09-04 A (+60d) | 0% → 100% |  |
| RHD4CZ5A014ST1203 | Bedding works for GRP Pipe Line 700 mm - (RD-A-1 /4)-Z5-A014-ST | 2026-07-07 A | 2026-07-09 → 2026-09-05 A (+58d) | 0% → 100% |  |
| RHD4CZ5A014ST1303 | Installing for GRP Pipe Line 700 mm - (RD-A-1 /4)-Z5-A014-ST | 2026-07-11 A | 2026-07-12 → 2026-09-06 A (+56d) | 0% → 100% |  |
| RHD4CZ5A014ST1503 | Backfilling and warning tape works for GRP Pipe Line 700 mm - (RD-A-1 /4)-Z5-A014-ST | 2026-07-15 A | 2026-07-18 → 2026-10-08 A (+82d) | 0% → 100% |  |
| RHD4CZ5A014ST1403 | Primary Test for GRP Pipe Line 700 mm - (RD-A-1 /4)-Z5-A014-ST | 2026-07-13 → 2027-01-24 (+195d) | 2026-07-14 → 2027-01-25 (+195d) |  |  |
| 3549 | **RHD4-02-002-A014-(ST)-GRP Pipes - 600 mm diameter** |  | 2026-07-20 → 2027-01-25 (+189d) |  |  |
| RHD4CZ5A014ST1102 | Excavation works for GRP Pipe Line 600 mm - (RD-A-1 /4)-Z5-A014-ST | 2026-07-07 A | 2026-07-08 → 2026-08-06 A (+29d) | 0% → 100% |  |
| RHD4CZ5A014ST1202 | Bedding works for GRP Pipe Line 600 mm - (RD-A-1 /4)-Z5-A014-ST | 2026-07-09 A | 2026-07-11 → 2026-08-09 A (+29d) | 0% → 100% |  |
| RHD4CZ5A014ST1302 | Installing for GRP Pipe Line 600 mm - (RD-A-1 /4)-Z5-A014-ST | 2026-07-12 A | 2026-07-13 → 2026-08-11 A (+29d) | 0% → 100% |  |
| RHD4CZ5A014ST1502 | Backfilling and warning tape works for GRP Pipe Line 600 mm - (RD-A-1 /4)-Z5-A014-ST | 2026-07-19 A | 2026-07-20 → 2026-09-08 A (+50d) | 0% → 100% |  |
| RHD4CZ5A014ST1402 | Primary Test for GRP Pipe Line 600 mm - (RD-A-1 /4)-Z5-A014-ST | 2026-07-14 → 2027-01-24 (+194d) | 2026-07-15 → 2027-01-25 (+194d) |  |  |
| 3548 | **RHD4-02-002-A014-(ST)-GRP Pipes - 500 mm diameter** |  | 2026-07-20 → 2027-01-27 (+191d) |  |  |
| RHD4CZ5A014ST1101 | Excavation works for GRP Pipe Line 500 mm - (RD-A-1 /4)-Z5-A014-ST | 2026-07-09 A | 2026-07-11 → 2026-09-05 A (+56d) | 0% → 100% |  |
| RHD4CZ5A014ST1201 | Bedding works for GRP Pipe Line 500 mm - (RD-A-1 /4)-Z5-A014-ST | 2026-07-12 A | 2026-07-13 → 2026-09-07 A (+56d) | 0% → 100% | resources Skilled labor [10.78 h]; Unskilled Labor [21.56 h]; Equipment Opreator [21.56 h]; Excavator-Poclain [10.78 h]; Dump Truck [10.78 h]; GRP (500mm Diameter) - ST - Depth less than 1.5 m [4.93 m]; GRP (500mm Diameter) - ST - Depth: 1.51m - 2.5m [4.96 m] → Skilled labor [10.78 h]; Unskilled Labor [21.6 h]; Equipment Opreator [21.6 h]; Excavator-Poclain [10.78 h]; Dump Truck [10.78 h]; GRP (500mm Diameter) - ST - Depth less than 1.5 m [4.93 m]; GRP (500mm Diameter) - ST - Depth: 1.51m - 2.5m [4.96 m] |
| RHD4CZ5A014ST1301 | Installing for GRP Pipe Line 500 mm - (RD-A-1 /4)-Z5-A014-ST | 2026-07-14 A | 2026-07-15 → 2026-09-08 A (+55d) | 0% → 100% | resources Unskilled Labor [21.56 h]; Plumber [10.78 h]; GRP (500mm Diameter) - ST - Depth less than 1.5 m [44.39 m]; GRP (500mm Diameter) - ST - Depth: 1.51m - 2.5m [39.7 m] → Unskilled Labor [21.6 h]; Plumber [10.78 h]; GRP (500mm Diameter) - ST - Depth less than 1.5 m [44.39 m]; GRP (500mm Diameter) - ST - Depth: 1.51m - 2.5m [39.7 m] |
| RHD4CZ5A014ST1401 | Primary Test for GRP Pipe Line 500 mm - (RD-A-1 /4)-Z5-A014-ST | 2026-07-16 A | 2026-07-18 → 2026-09-09 A (+53d) | 0% → 100% |  |
| RHD4CZ5A014ST1501 | Backfilling and warning tape works for GRP Pipe Line 500 mm - (RD-A-1 /4)-Z5-A014-ST | 2026-07-19 → 2027-01-26 (+191d) | 2026-07-20 → 2027-01-27 (+191d) |  | resources Skilled labor [10.78 h]; Unskilled Labor [21.56 h]; Equipment Opreator [21.56 h]; Excavator-Poclain [10.78 h]; Dump Truck [10.78 h]; GRP (500mm Diameter) - ST - Depth less than 1.5 m [19.73 m]; GRP (500mm Diameter) - ST - Depth: 1.51m - 2.5m [19.85 m] → Skilled labor [10.78 h]; Unskilled Labor [21.6 h]; Equipment Opreator [21.6 h]; Excavator-Poclain [10.78 h]; Dump Truck [10.78 h]; GRP (500mm Diameter) - ST - Depth less than 1.5 m [19.73 m]; GRP (500mm Diameter) - ST - Depth: 1.51m - 2.5m [19.85 m] |
| 3547 | **RHD4-02-002-A014-(ST)-GRP Pipes - 400 mm diameter** |  | 2026-07-22 → 2027-01-25 (+187d) |  |  |
| RHD4CZ5A014ST1100 | Excavation works for GRP Pipe Line 400 mm - (RD-A-1 /4)-Z5-A014-ST | 2026-07-12 A | 2026-07-13 → 2026-09-04 A (+53d) | 0% → 100% |  |
| RHD4CZ5A014ST1200 | Bedding works for GRP Pipe Line 400 mm - (RD-A-1 /4)-Z5-A014-ST | 2026-07-14 A | 2026-07-15 → 2026-09-06 A (+53d) | 0% → 100% | resources Skilled labor [8.39 h]; Unskilled Labor [16.77 h]; Equipment Opreator [16.77 h]; Excavator-Poclain [8.39 h]; Dump Truck [8.39 h]; GRP (400mm Diameter) - ST - Depth less than 1.5 m [9.1 m]; GRP (400mm Diameter) - ST - Depth: 1.51m - 2.5 m → Skilled labor [8.39 h]; Unskilled Labor [16.8 h]; Equipment Opreator [16.8 h]; Excavator-Poclain [8.39 h]; Dump Truck [8.39 h]; GRP (400mm Diameter) - ST - Depth less than 1.5 m [9.1 m]; GRP (400mm Diameter) - ST - Depth: 1.51m - 2.5 m |
| RHD4CZ5A014ST1300 | Installing for GRP Pipe Line 400 mm - (RD-A-1 /4)-Z5-A014-ST | 2026-07-16 A | 2026-07-18 → 2026-09-07 A (+51d) | 0% → 100% |  |
| RHD4CZ5A014ST1500 | Backfilling and warning tape works for GRP Pipe Line 400 mm - (RD-A-1 /4)-Z5-A014-ST | 2026-07-21 A | 2026-07-22 → 2026-09-08 A (+48d) | 0% → 100% |  |
| RHD4CZ5A014ST1400 | Primary Test for GRP Pipe Line 400 mm - (RD-A-1 /4)-Z5-A014-ST | 2026-07-19 → 2027-01-24 (+189d) | 2026-07-20 → 2027-01-25 (+189d) |  | resources Unskilled Labor [7.19 h]; Plumber [7.19 h]; Equipment Opreator [7.19 h]; Water Truck [7.19 h]; GRP (400mm Diameter) - ST - Depth less than 1.5 m [36.39 m]; GRP (400mm Diameter) - ST - Depth: 1.51m - 2.5 m → Unskilled Labor [7.2 h]; Plumber [7.2 h]; Equipment Opreator [7.2 h]; Water Truck [7.2 h]; GRP (400mm Diameter) - ST - Depth less than 1.5 m [36.39 m]; GRP (400mm Diameter) - ST - Depth: 1.51m - 2.5 m |
| 3562 | **RHD4-02-002-A014-(ST)-UPVC Pipes - 400 mm diameter** |  | 2026-07-25 → 2027-01-25 (+184d) |  |  |
| RHD4CZ5A014ST2101 | Excavation works for UPVC Pipe Line 400 mm - (RD-A-1 /4)-Z5-A014-ST | 2026-07-06 A | 2026-07-07 → 2026-08-18 A (+42d) | 0% → 100% | resources Skilled labor [1.31 h]; Unskilled Labor [1.31 h]; Equipment Opreator [1.63 h]; Excavator-Poclain [1.31 h]; Dump Truck [0.22 h]; UPVC (400mm Diameter) - ST - Depth less than 1.5 [2.46 m]; UPVC (400mm Diameter) - ST - Depth: 1.51m - 2.5m → Skilled labor [1.31 h]; Unskilled Labor [1.31 h]; Equipment Opreator [1.6 h]; Excavator-Poclain [1.31 h]; Dump Truck [0.22 h]; UPVC (400mm Diameter) - ST - Depth less than 1.5 [2.46 m]; UPVC (400mm Diameter) - ST - Depth: 1.51m - 2.5m |
| RHD4CZ5A014ST2201 | Bedding works for UPVC Pipe Line 400 mm - (RD-A-1 /4)-Z5-A014-ST | 2026-07-08 A | 2026-07-09 → 2026-08-22 A (+44d) | 0% → 100% |  |
| RHD4CZ5A014ST2301 | Installing for UPVC Pipe Line 400 mm - (RD-A-1 /4)-Z5-A014-ST | 2026-07-11 A | 2026-07-12 → 2026-08-23 A (+42d) | 0% → 100% |  |
| RHD4CZ5A014ST2501 | Backfilling and warning tape works for UPVC Pipe Line 400 mm - (RD-A-1 /4)-Z5-A014-ST | 2026-07-23 A | 2026-07-25 → 2026-09-02 A (+39d) | 0% → 100% |  |
| RHD4CZ5A014ST2401 | Primary Test for UPVC Pipe Line 400 mm - (RD-A-1 /4)-Z5-A014-ST | 2026-07-13 → 2027-01-24 (+195d) | 2026-07-14 → 2027-01-25 (+195d) |  |  |
| 3561 | **RHD4-02-002-A014-(ST)-UPVC Pipes - 300 mm diameter** |  | 2026-08-09 → 2027-01-30 (+174d) |  |  |
| RHD4CZ5A014ST2100 | Excavation works for UPVC Pipe Line 300 mm - (RD-A-1 /4)-Z5-A014-ST | 2026-07-08 A | 2026-07-14 → 2026-09-05 A (+53d) | 0% → 100% |  |
| RHD4CZ5A014ST2200 | Bedding works for UPVC Pipe Line 300 mm - (RD-A-1 /4)-Z5-A014-ST | 2026-07-15 A | 2026-07-20 → 2026-09-06 A (+48d) | 0% → 100% |  |
| RHD4CZ5A014ST2300 | Installing for UPVC Pipe Line 300 mm - (RD-A-1 /4)-Z5-A014-ST | 2026-07-21 A | 2026-07-27 → 2026-09-07 A (+42d) | 0% → 100% |  |
| RHD4CZ5A014ST2500 | Backfilling and warning tape works for UPVC Pipe Line 300 mm - (RD-A-1 /4)-Z5-A014-ST | 2026-08-02 A | 2026-08-09 → 2026-09-08 A (+30d) | 0% → 100% |  |
| RHD4CZ5A014ST2400 | Primary Test for UPVC Pipe Line 300 mm - (RD-A-1 /4)-Z5-A014-ST | 2026-07-28 → 2027-01-26 (+182d) | 2026-08-01 → 2027-01-30 (+182d) |  |  |
| 3566 | **RHD4-02-002-A014-(ST)-Discharge Chamber - 1500*1200 mm** | 2026-07-19 → 2027-01-24 (+189d) | 2026-07-27 → 2027-02-01 (+189d) |  |  |
| RHD4CZ5A014ST5101 | Excavation+Bedding for Discharge Chamber With GRP 800 mm Dia - 1500*1200 mm - (RD-A-1 /4)-Z5-A014-ST | 2026-07-19 → 2027-01-24 (+189d) | 2026-07-20 → 2027-01-25 (+189d) |  |  |
| RHD4CZ5A014ST5201 | PC works for Discharge Chamber With GRP 800 mm Dia - 1500*1200 mm - (RD-A-1 /4)-Z5-A014-ST | 2026-07-21 → 2027-01-26 (+189d) | 2026-07-22 → 2027-01-27 (+189d) |  |  |
| RHD4CZ5A014ST5301 | Installation for Discharge Chamber With GRP 800 mm Dia - 1500*1200 mm - (RD-A-1 /4)-Z5-A014-ST | 2026-07-23 → 2027-01-28 (+189d) | 2026-07-25 → 2027-01-30 (+189d) |  |  |
| RHD4CZ5A014ST5401 | Backfilling works for Discharge Chamber With GRP 800 mm Dia - 1500*1200 mm - (RD-A-1 /4)-Z5-A014-ST | 2026-07-26 → 2027-01-31 (+189d) | 2026-07-27 → 2027-02-01 (+189d) |  |  |
| 3567 | **RHD4-02-002-A014-(ST)-HDPE Force Main Pipeline - 200 mm diameter** | 2026-07-21 → 2027-01-26 (+189d) | 2026-08-01 → 2027-02-06 (+189d) |  |  |
| RHD4CZ5A014ST9100 | Excavation works for HDPE Force Main Pipeline 200 mm - (RD-A-1 /4)-Z5-A014-ST | 2026-07-21 → 2027-01-26 (+189d) | 2026-07-22 → 2027-01-27 (+189d) |  |  |
| RHD4CZ5A014ST9200 | Bedding works for HDPE Force Main Pipeline 200 mm - (RD-A-1 /4)-Z5-A014-ST | 2026-07-23 → 2027-01-28 (+189d) | 2026-07-25 → 2027-01-30 (+189d) |  | resources Skilled labor [0.87 h]; Unskilled Labor [1.63 h]; Equipment Opreator [1.63 h]; Bobcat [0.87 h]; Dump Truck [0.87 h]; HDPE (200mm Diameter) - ST - in trenches depth less than 1.5m [1.15 m] → Skilled labor [0.87 h]; Unskilled Labor [1.6 h]; Equipment Opreator [1.6 h]; Bobcat [0.87 h]; Dump Truck [0.87 h]; HDPE (200mm Diameter) - ST - in trenches depth less than 1.5m [1.15 m] |
| RHD4CZ5A014ST9300 | Installing for HDPE Force Main Pipeline 200 mm - (RD-A-1 /4)-Z5-A014-ST | 2026-07-26 → 2027-01-31 (+189d) | 2026-07-27 → 2027-02-01 (+189d) |  |  |
| RHD4CZ5A014ST9400 | Primary Test for HDPE Force Main Pipeline 200 mm - (RD-A-1 /4)-Z5-A014-ST | 2026-07-28 → 2027-02-02 (+189d) | 2026-07-29 → 2027-02-03 (+189d) |  |  |
| RHD4CZ5A014ST9500 | Backfilling and warning tape works for HDPE Force Main Pipeline 200 mm - (RD-A-1 /4)-Z5-A014-ST | 2026-07-30 → 2027-02-04 (+189d) | 2026-08-01 → 2027-02-06 (+189d) |  |  |
| 3569 | **RHD4-02-002-A014-(ST)-Concrete Encasement** | 2026-07-21 → 2026-09-05 (+46d) | 2026-07-22 → 2027-01-25 (+187d) |  |  |
| RHD4CZ5A014ST6100 | Pipe Encasement for Storm Pipelines - (RD-A-1 /4)-Z5-A014-ST | 2026-07-21 → 2026-09-05 A (+46d) | 2026-07-22 → 2027-01-25 (+187d) | 0% → 50% | resources Skilled labor [7.84 h]; Unskilled Labor [7.84 h]; Equipment Opreator [8.71 h]; Concrete Mixer Truck [0.76 h]; Dump Truck [7.84 h]; Pipe Encasement - ST [144.67 m3] → Skilled labor [7.84 h]; Unskilled Labor [7.84 h]; Equipment Opreator [8.71 h]; Concrete Mixer Truck [0.8 h]; Dump Truck [7.84 h]; Pipe Encasement - ST [144.67 m3] |
| 3570 | **RHD4-02-002-Z5-A014-Catch Basin - ST** |  | 2026-08-13 → 2027-02-11 (+182d) |  |  |
| 3571 | **RHD4-02-002-A014-(ST)-Single Catch Basin Works** |  | 2026-08-11 → 2027-02-09 (+182d) |  |  |
| RHD4CZ5A014ST7100 | Excavation works for Single Catch Basin - (RD-A-1 /4)-Z5-A014-ST | 2026-07-06 A | 2026-07-11 → 2026-09-04 A (+55d) | 0% → 100% | resources Skilled labor [54.45 h]; Unskilled Labor [108.9 h]; Equipment Opreator [81.68 h]; Excavator-Poclain [54.45 h]; Dump Truck [27.23 h]; Single Catch basin - ST [12.5 nr] → Skilled labor [54.45 h]; Unskilled Labor [108.9 h]; Equipment Opreator [81.68 h]; Excavator-Poclain [54.45 h]; Dump Truck [27.2 h]; Single Catch basin - ST [12.5 nr] |
| RHD4CZ5A014ST7200 | PC Blinding, Installation and Pipe connection for Single Catch Basin - (RD-A-1 /4)-Z5-A014-ST | 2026-07-12 A | 2026-07-16 → 2026-09-06 A (+52d) | 0% → 100% | resources Skilled labor [54.45 h]; Unskilled Labor [108.9 h]; Plumber [27.23 h]; Equipment Opreator [10.89 h]; Boom Truck [10.89 h]; Single Catch basin - ST [10 nr] → Skilled labor [54.45 h]; Unskilled Labor [108.9 h]; Plumber [27.2 h]; Equipment Opreator [10.89 h]; Boom Truck [10.89 h]; Single Catch basin - ST [10 nr] |
| RHD4CZ5A014ST7300 | Rings & C.Slab & Final Backfill for Single Catch Basin - (RD-A-1 /4)-Z5-A014-ST | 2026-07-18 → 2026-09-07 A (+51d) | 2026-07-25 → 2026-09-30 A (+67d) | 0% → 100% | resources Skilled labor [68.06 h]; Unskilled Labor [136.13 h]; Equipment Opreator [81.68 h]; Boom Truck [13.61 h]; Bobcat [68.06 h]; Single Catch basin - ST [17.5 nr] → Skilled labor [68.06 h]; Unskilled Labor [136.13 h]; Equipment Opreator [81.68 h]; Boom Truck [13.6 h]; Bobcat [68.06 h]; Single Catch basin - ST [17.5 nr] |
| RHD4CZ5A014ST7400 | Steel Cover for Single Catch Basin - (RD-A-1 /4)-Z5-A014-ST | 2026-07-26 → 2027-01-24 (+182d) | 2026-07-30 → 2027-01-28 (+182d) |  |  |
| RHD4CZ5A014ST7500 | Finishing and Insulation works for Single Catch Basin - (RD-A-1 /4)-Z5-A014-ST | 2026-08-01 → 2027-01-30 (+182d) | 2026-08-11 → 2027-02-09 (+182d) |  |  |
| 3572 | **RHD4-02-002-A014-(ST)-Double Catch Basin Works** |  | 2026-08-13 → 2027-02-11 (+182d) |  |  |
| RHD4CZ5A014ST8100 | Excavation works for Double Catch Basin - (RD-A-1 /4)-Z5-A014-ST | 2026-07-12 A | 2026-07-13 → 2026-08-06 A (+24d) | 0% → 100% |  |
| RHD4CZ5A014ST8200 | PC Blinding, Installation and Pipe connection for Double Catch Basin - (RD-A-1 /4)-Z5-A014-ST | 2026-07-18 A | 2026-07-19 → 2026-08-19 A (+31d) | 0% → 100% |  |
| RHD4CZ5A014ST8300 | Rings & C.Slab & Final Backfillfor Double Catch Basin - (RD-A-1 /4)-Z5-A014-ST | 2026-07-26 A | 2026-07-27 → 2026-09-06 A (+41d) | 0% → 100% |  |
| RHD4CZ5A014ST8400 | Steel Cover for Double Catch Basin - (RD-A-1 /4)-Z5-A014-ST | 2026-07-28 → 2027-01-24 (+180d) | 2026-07-29 → 2027-01-25 (+180d) |  |  |
| RHD4CZ5A014ST8500 | Finishing and Insulation works for Double Catch Basin - (RD-A-1 /4)-Z5-A014-ST | 2026-08-12 → 2027-02-10 (+182d) | 2026-08-13 → 2027-02-11 (+182d) |  |  |
| 3595 | **RHD4-02-002-Z5-A014-Sewage Network - SW** | 2026-08-10 → 2026-08-11 (+1d) | 2026-08-27 → 2027-02-17 (+174d) |  |  |
| 4361 | **RHD4-02-002-A014-(SW)-MH Works - 1200 mm diameter** | 2026-08-12 → 2026-09-05 (+24d) | 2026-08-27 → 2027-02-17 (+174d) |  |  |
| RHD4CZ5A014SW3100 | Excavation and PC Blinding works for MH 1200 mm - (RD-A-1 /4)-Z5-A014-SW | 2026-08-12 → 2026-09-05 A (+24d) | 2026-08-15 → 2027-02-04 (+173d) | 0% → 80% |  |
| RHD4CZ5A014SW3200 | Installation of Base for MH 1200 mm - (RD-A-1 /4)-Z5-A014-SW | 2026-08-16 → 2026-09-06 A (+21d) | 2026-08-18 → 2027-02-08 (+174d) | 0% → 80% |  |
| RHD4CZ5A014SW3300 | MH Ring and C.Slab works and Backfilling works for MH 1200 mm - (RD-A-1 /4)-Z5-A014-SW | 2026-08-19 → 2026-09-07 A (+19d) | 2026-08-22 → 2027-02-11 (+173d) | 0% → 80% |  |
| RHD4CZ5A014SW3400 | Steel Cover for MH 1200 mm - (RD-A-1 /4)-Z5-A014-SW | 2026-08-23 → 2027-02-13 (+174d) | 2026-08-24 → 2027-02-14 (+174d) |  |  |

| ID | Task | Start | Finish | Duration | Complete | Other |
| --- | --- | --- | --- | --- | --- | --- |
| RHD4CZ5A014SW3500 | Finishing, Benching, Testing works for MH 1200 mm - (RD-A-1 /4)-Z5-A014-SW | 2026-08-25 → 2027-02-15 (+174d) | 2026-08-27 → 2027-02-17 (+174d) |  |  |  |
| 3601 | **RHD4-02-002-A014-(SW)-UPVC Pipes - 200 mm diameter** | 2026-08-10 → 2026-08-11 (+1d) | 2026-08-20 → 2027-02-03 (+167d) |  |  |  |
| RHD4CZ5A014SW2100 | Excavation works for UPVC Pipe Line 200 mm - (RD-A-1 /4)-Z5-A014-SW | 2026-08-10 → 2026-08-11 A (+1d) | 2026-08-11 → 2026-09-06 A (+26d) |  | 0% → 100% | resources Skilled labor [16.77 h]; Unskilled Labor [16.77 h]; Equipment Opreator [20.15 h]; Excavator-Poclain [16.77 h]; Dump Truck [3.38 h]; UPVC (200mm Diameter) - SW - Depth: less than 1.5m [14.99 m]; UPVC (200mm Diameter) - SW - Depth: 1.51m - 2.5m [24.11 m]; UPVC (200mm Diameter) - SW - Depth: 2.51m - 3.5m → Skilled labor [16.8 h]; Unskilled Labor [16.8 h]; Equipment Opreator [20.15 h]; Excavator-Poclain [16.8 h]; Dump Truck [3.38 h]; UPVC (200mm Diameter) - SW - Depth: less than 1.5m [14.99 m]; UPVC (200mm Diameter) - SW - Depth: 1.51m - 2.5m [24.11 m]; UPVC (200mm Diameter) - SW - Depth: 2.51m - 3.5m |
| RHD4CZ5A014SW2200 | Bedding works for UPVC Pipe Line 200 mm - (RD-A-1 /4)-Z5-A014-SW | 2026-08-12 A | 2026-08-13 → 2026-09-08 A (+26d) |  | 0% → 100% |  |
| RHD4CZ5A014SW2300 | Installing for UPVC Pipe Line 200 mm - (RD-A-1 /4)-Z5-A014-SW | 2026-08-15 A | 2026-08-16 → 2026-09-09 A (+24d) |  | 0% → 100% |  |
| RHD4CZ5A014SW2500 | Backfilling and warning tape works for UPVC Pipe Line 200 mm - (RD-A-1 /4)-Z5-A014-SW | 2026-08-19 → 2026-08-17 A (-2d) | 2026-08-20 → 2026-09-19 A (+30d) |  | 0% → 100% | resources Skilled labor [18.4 h]; Unskilled Labor [36.81 h]; Equipment Opreator [36.81 h]; Excavator-Poclain [18.4 h]; Dump Truck [18.4 h]; UPVC (200mm Diameter) - SW - Depth: less than 1.5m [29.98 m]; UPVC (200mm Diameter) - SW - Depth: 1.51m - 2.5m [32.15 m]; UPVC (200mm Diameter) - SW - Depth: 2.51m - 3.5m → Skilled labor [18.4 h]; Unskilled Labor [36.8 h]; Equipment Opreator [36.8 h]; Excavator-Poclain [18.4 h]; Dump Truck [18.4 h]; UPVC (200mm Diameter) - SW - Depth: less than 1.5m [29.98 m]; UPVC (200mm Diameter) - SW - Depth: 1.51m - 2.5m [32.15 m]; UPVC (200mm Diameter) - SW - Depth: 2.51m - 3.5m |
| RHD4CZ5A014SW2400 | Primary Test for UPVC Pipe Line 200 mm - (RD-A-1 /4)-Z5-A014-SW | 2026-08-17 → 2027-02-02 (+169d) | 2026-08-18 → 2027-02-03 (+169d) |  |  |  |
| 3632 | **RHD4-02-002-Z5-A014-Potable Network - PT** | 2026-08-22 → 2027-02-07 (+169d) | 2026-10-05 → 2027-04-04 (+181d) |  |  |  |
| 3635 | **RHD4-02-002-A014-(PT)-HDPE Pipes - 200 mm diameter** | 2026-08-22 → 2027-02-07 (+169d) | 2026-09-19 → 2027-03-08 (+170d) |  |  |  |
| RHD4CZ5A014PT1102 | Excavation works for HDPE Pipline 200 mm - (RD-A-1 /4)-Z5-A014-PT | 2026-08-22 → 2027-02-07 (+169d) | 2026-08-26 → 2027-02-11 (+169d) |  |  |  |
| RHD4CZ5A014PT1202 | Bedding works for HDPE Pipline 200 mm - (RD-A-1 /4)-Z5-A014-PT | 2026-08-27 → 2027-02-13 (+170d) | 2026-08-31 → 2027-02-16 (+169d) |  |  |  |
| RHD4CZ5A014PT1302 | Installing for HDPE Pipline 200 mm - (RD-A-1 /4)-Z5-A014-PT | 2026-09-01 → 2027-02-17 (+169d) | 2026-09-08 → 2027-02-25 (+170d) |  |  |  |
| RHD4CZ5A014PT1402 | Primary Test for HDPE Pipline 200 mm - (RD-A-1 /4)-Z5-A014-PT | 2026-09-09 → 2027-02-27 (+171d) | 2026-09-12 → 2027-03-01 (+170d) |  |  |  |
| RHD4CZ5A014PT1502 | Backfilling and warning tape works for HDPE Pipline 200 mm - (RD-A-1 /4)-Z5-A014-PT | 2026-09-13 → 2027-03-02 (+170d) | 2026-09-19 → 2027-03-08 (+170d) |  |  | resources Skilled labor [56.41 h]; Unskilled Labor [112.82 h]; Equipment Opreator [112.82 h]; Excavator-Poclain [56.41 h]; Dump Truck [56.41 h]; HDPE (200mm Diameter) - PT - Depth: less than 1.5m [196.05 m]; HDPE (200mm Diameter) - PT - Depth: more than 1.5m [0.77 m] → Skilled labor [56.41 h]; Unskilled Labor [112.8 h]; Equipment Opreator [112.8 h]; Excavator-Poclain [56.41 h]; Dump Truck [56.41 h]; HDPE (200mm Diameter) - PT - Depth: less than 1.5m [196.05 m]; HDPE (200mm Diameter) - PT - Depth: more than 1.5m [0.77 m] |
| 2692 | **RHD4-02-002-A014-(PT)-Gate Valves (Direct Buried)** | 2026-09-09 → 2027-02-27 (+171d) | 2026-09-13 → 2027-03-02 (+170d) |  |  |  |
| RHD4CZ5A014PT3100 | Installation for Direct Buried Gate Valves - (RD-A-1 /4)-Z5-A014-PT | 2026-09-09 → 2027-02-27 (+171d) | 2026-09-10 → 2027-02-28 (+171d) |  |  |  |
| RHD4CZ5A014PT3200 | Stem and Service box for Direct Buried Gate Valves - (RD-A-1 /4)-Z5-A014-PT | 2026-09-12 → 2027-03-01 (+170d) | 2026-09-13 → 2027-03-02 (+170d) |  |  |  |
| 3642 | **RHD4-02-002-A014-(PT)-Wash out Valves** | 2026-09-28 → 2027-03-20 (+173d) | 2026-10-05 → 2027-03-27 (+173d) |  |  |  |
| RHD4CZ5A014PT3102 | Installation for Wash out Valves for Potable Water Network - (RD-A-1 /4)-Z5-A014-PT | 2026-09-28 → 2027-03-20 (+173d) | 2026-09-29 → 2027-03-21 (+173d) |  |  |  |
| RHD4CZ5A014PT3202 | Stem and Service box for Wash out Valves for Potable Water Network - (RD-A-1 /4)-Z5-A014-PT | 2026-10-04 → 2027-03-25 (+172d) | 2026-10-05 → 2027-03-27 (+173d) |  |  |  |
| 3643 | **RHD4-02-002-A014-(PT)-Air Valve Chambers** | 2026-09-20 → 2027-03-13 (+174d) | 2026-09-29 → 2027-03-21 (+173d) |  |  |  |
| RHD4CZ5A014PT2102 | Excavation and Bedding for Air Valve Chambers for Potable Water Network - (RD-A-1 /4)-Z5-A014-PT | 2026-09-20 → 2027-03-13 (+174d) | 2026-09-21 → 2027-03-14 (+174d) |  |  |  |
| RHD4CZ5A014PT2202 | PC works for Air Valve Chambers for Potable Water Network - (RD-A-1 /4)-Z5-A014-PT | 2026-09-22 → 2027-03-15 (+174d) | 2026-09-24 → 2027-03-16 (+173d) |  |  |  |
| RHD4CZ5A014PT2302 | Installation for Air Valve Chambers for Potable Water Network - (RD-A-1 /4)-Z5-A014-PT | 2026-09-26 → 2027-03-17 (+172d) | 2026-09-27 → 2027-03-18 (+172d) |  |  |  |
| RHD4CZ5A014PT2402 | Backfilling works for Air Valve Chambers for Potable Water Network - (RD-A-1 /4)-Z5-A014-PT | 2026-09-28 → 2027-03-20 (+173d) | 2026-09-29 → 2027-03-21 (+173d) |  |  |  |
| 3644 | **RHD4-02-002-A014-(PT)-Air Valves** | 2026-09-28 → 2027-03-20 (+173d) | 2026-10-03 → 2027-04-04 (+183d) |  |  |  |
| RHD4CZ5A014PT3103 | Installation for Air Valves for Potable Water Network - (RD-A-1 /4)-Z5-A014-PT | 2026-09-28 → 2027-03-20 (+173d) | 2026-09-29 → 2027-03-21 (+173d) |  |  |  |
| RHD4CZ5A014PT3203 | Stem and Service box for Air Valves for Potable Water Network - (RD-A-1 /4)-Z5-A014-PT | 2026-09-30 → 2027-04-01 (+183d) | 2026-10-03 → 2027-04-04 (+183d) |  |  |  |
| 3645 | **RHD4-02-002-A014-(PT)-Fire Hydrant** | 2026-09-20 → 2027-03-13 (+174d) | 2026-10-03 → 2027-03-24 (+172d) |  |  |  |
| RHD4CZ5A014PT4100 | Excavation and Bedding and Pipe Installation for Fire Hydrant - (RD-A-1 /4)-Z5-A014-PT | 2026-09-20 → 2027-03-13 (+174d) | 2026-09-22 → 2027-03-15 (+174d) |  |  |  |
| RHD4CZ5A014PT4200 | Valve Installation for Fire Hydrant - (RD-A-1 /4)-Z5-A014-PT | 2026-09-24 → 2027-03-16 (+173d) | 2026-09-26 → 2027-03-17 (+172d) |  |  |  |
| RHD4CZ5A014PT4300 | Stem for Fire Hydrant - (RD-A-1 /4)-Z5-A014-PT | 2026-09-27 → 2027-03-18 (+172d) | 2026-09-28 → 2027-03-20 (+173d) |  |  |  |
| RHD4CZ5A014PT4400 | Fire Installation for Fire Hydrant - (RD-A-1 /4)-Z5-A014-PT | 2026-09-29 → 2027-03-21 (+173d) | 2026-09-30 → 2027-03-22 (+173d) |  |  |  |
| RHD4CZ5A014PT4500 | Protection Barriers for Fire Hydrant - (RD-A-1 /4)-Z5-A014-PT | 2026-10-01 → 2027-03-23 (+173d) | 2026-10-03 → 2027-03-24 (+172d) |  |  |  |
| 3641 | **RHD4-02-002-A014-(PT)-Wash out Valve Chambers** | 2026-09-20 → 2027-03-13 (+174d) | 2026-10-03 → 2027-03-24 (+172d) |  |  |  |
| RHD4CZ5A014PT2101 | Excavation and Bedding for Wash out Valve Chambers for Potable Water Network - (RD-A-1 /4)-Z5-A014-PT | 2026-09-20 → 2027-03-13 (+174d) | 2026-09-21 → 2027-03-14 (+174d) |  |  |  |
| RHD4CZ5A014PT2201 | PC works for Wash out Valve Chambers for Potable Water Network - (RD-A-1 /4)-Z5-A014-PT | 2026-09-22 → 2027-03-15 (+174d) | 2026-09-24 → 2027-03-16 (+173d) |  |  |  |
| RHD4CZ5A014PT2301 | Installation for Wash out Valve Chambers for Potable Water Network - (RD-A-1 /4)-Z5-A014-PT | 2026-09-26 → 2027-03-17 (+172d) | 2026-09-27 → 2027-03-18 (+172d) |  |  |  |
| RHD4CZ5A014PT2401 | Backfilling works for Wash out Valve Chambers for Potable Water Network - (RD-A-1 /4)-Z5-A014-PT | 2026-09-28 → 2027-03-20 (+173d) | 2026-10-03 → 2027-03-24 (+172d) |  |  |  |
| 3647 | **RHD4-02-002-Z5-A014-Irrigation Network - IRR** | 2026-08-27 → 2026-08-04 (-23d) | 2026-09-29 → 2027-03-31 (+183d) |  |  |  |
| 3651 | **RHD4-02-002-A014-(IRR)-HDPE Pipes - 250 mm diameter** | 2026-08-27 → 2027-02-13 (+170d) | 2026-09-29 → 2027-03-31 (+183d) |  |  |  |
| RHD4CZ5A014IRR1103 | Excavation works for HDPE Pipline 250 mm - (RD-A-1 /4)-Z5-A014-IRR | 2026-08-27 → 2027-02-13 (+170d) | 2026-08-31 → 2027-02-20 (+173d) | 4d → 7d |  |  |
| RHD4CZ5A014IRR1203 | Bedding works for HDPE Pipline 250 mm - (RD-A-1 /4)-Z5-A014-IRR | 2026-09-01 → 2027-02-21 (+173d) | 2026-09-07 → 2027-02-28 (+174d) |  |  |  |
| RHD4CZ5A014IRR1303 | Installing for HDPE Pipline 250 mm - (RD-A-1 /4)-Z5-A014-IRR | 2026-09-08 → 2027-03-01 (+174d) | 2026-09-15 → 2027-03-08 (+174d) |  |  |  |
| RHD4CZ5A014IRR1403 | Primary Test for HDPE Pipline 250 mm - (RD-A-1 /4)-Z5-A014-IRR | 2026-09-16 → 2027-03-13 (+178d) | 2026-09-19 → 2027-03-15 (+177d) |  |  |  |
| RHD4CZ5A014IRR1503 | Backfilling and warning tape works for HDPE Pipline 250 mm - (RD-A-1 /4)-Z5-A014-IRR | 2026-09-20 → 2027-03-23 (+184d) | 2026-09-29 → 2027-03-31 (+183d) |  |  |  |
| 1770 | **RHD4-02-002-A014-(IRR)-Air Valves** | 2026-09-08 → 2027-03-01 (+174d) | 2026-09-12 → 2027-03-04 (+173d) |  |  |  |
| RHD4CZ5A014IRR3103 | Installation for Air Valves for Irrigation Network - (RD-A-1 /4)-Z5-A014-IRR | 2026-09-08 → 2027-03-01 (+174d) | 2026-09-09 → 2027-03-02 (+174d) |  |  |  |
| RHD4CZ5A014IRR3203 | Stem and Service box for Air Valves for Irrigation Network - (RD-A-1 /4)-Z5-A014-IRR | 2026-09-10 → 2027-03-03 (+174d) | 2026-09-12 → 2027-03-04 (+173d) |  |  |  |
| 6107 | **RHD4-02-002-A014-(IRR)-HDPE Pipes - 160 mm diameter** | 2026-09-01 → 2026-08-04 (-28d) | 2026-09-12 → 2027-02-23 (+164d) |  |  |  |
| RHD4CZ5A014IRR1100 | Excavation works for HDPE Pipline 160 mm - (RD-A-1 /4)-Z5-A014-IRR | 2026-09-01 → 2026-08-04 A (-28d) | 2026-09-02 → 2026-08-05 A (-28d) |  | 0% → 100% |  |
| RHD4CZ5A014IRR1200 | Bedding works for HDPE Pipline 160 mm - (RD-A-1 /4)-Z5-A014-IRR | 2026-09-03 → 2026-08-06 A (-28d) | 2026-09-05 → 2026-08-08 A (-28d) |  | 0% → 100% |  |
| RHD4CZ5A014IRR1300 | Installing for HDPE Pipline 160 mm - (RD-A-1 /4)-Z5-A014-IRR | 2026-09-06 → 2026-08-08 A (-29d) | 2026-09-07 → 2026-08-09 A (-29d) |  | 0% → 100% |  |
| RHD4CZ5A014IRR1500 | Backfilling and warning tape works for HDPE Pipline 160 mm - (RD-A-1 /4)-Z5-A014-IRR | 2026-09-10 → 2026-09-05 A (-5d) | 2026-09-12 → 2026-09-06 A (-6d) |  | 0% → 100% |  |
| RHD4CZ5A014IRR1400 | Primary Test for HDPE Pipline 160 mm - (RD-A-1 /4)-Z5-A014-IRR | 2026-09-08 → 2027-02-21 (+166d) | 2026-09-09 → 2027-02-23 (+167d) |  |  |  |
| 6115 | **RHD4-02-002-A014-(IRR)-Gate Valves (Direct Buried)** | 2026-09-06 → 2027-02-21 (+168d) | 2026-09-15 → 2027-02-28 (+166d) |  |  |  |
| RHD4CZ5A014IRR3100 | Installation for Direct Buried Gate Valves - (RD-A-1 /4)-Z5-A014-IRR | 2026-09-06 → 2027-02-21 (+168d) | 2026-09-08 → 2027-02-24 (+169d) |  |  | resources Unskilled Labor [27.23 h]; Plumber [27.23 h]; Gate valves dia 100 mm - TSE [4.5 nr] → Unskilled Labor [27.2 h]; Plumber [27.2 h]; Gate valves dia 100 mm - TSE [4.5 nr] |
| RHD4CZ5A014IRR3200 | Stem and Service box for Direct Buried Gate Valves - (RD-A-1 /4)-Z5-A014-IRR | 2026-09-13 → 2027-02-25 (+165d) | 2026-09-15 → 2027-02-28 (+166d) |  |  | resources Unskilled Labor [27.23 h]; Plumber [27.23 h]; Gate valves dia 100 mm - TSE [0.5 nr] → Unskilled Labor [27.2 h]; Plumber [27.2 h]; Gate valves dia 100 mm - TSE [0.5 nr] |
| 1769 | **RHD4-02-002-A014-(IRR)-Air Valve Chamber** | 2026-09-01 → 2027-02-21 (+173d) | 2026-09-09 → 2027-03-02 (+174d) |  |  |  |
| RHD4CZ5A014IRR2102 | Excavation and Bedding for Valve Chamber for Irrigation Network - (RD-A-1 /4)-Z5-A014-IRR | 2026-09-01 → 2027-02-21 (+173d) | 2026-09-02 → 2027-02-23 (+174d) |  |  |  |
| RHD4CZ5A014IRR2202 | PC works for Valve Chamber for Irrigation Network - (RD-A-1 /4)-Z5-A014-IRR | 2026-09-03 → 2027-02-24 (+174d) | 2026-09-05 → 2027-02-25 (+173d) |  |  |  |
| RHD4CZ5A014IRR2302 | Installation for Valve Chamber for Irrigation Network - (RD-A-1 /4)-Z5-A014-IRR | 2026-09-06 → 2027-02-27 (+174d) | 2026-09-07 → 2027-02-28 (+174d) |  |  |  |
| RHD4CZ5A014IRR2402 | Backfilling works for Valve Chamber for Irrigation Network - (RD-A-1 /4)-Z5-A014-IRR | 2026-09-08 → 2027-03-01 (+174d) | 2026-09-09 → 2027-03-02 (+174d) |  |  |  |
| 3681 | **RHD4-02-002-Z5-A014-Medium Voltage Network - MV** | 2026-09-01 → 2026-08-04 (-28d) | 2027-03-24 → 2027-09-12 (+172d) |  |  |  |
| 3682 | **RHD4-02-002-A014-(MV)-Medium Voltage cable trench** | 2027-01-27 → 2027-07-22 (+176d) | 2027-03-24 → 2027-09-12 (+172d) |  |  |  |
| RHD4CZ5A014MV1100 | Excavation for Medium Voltage Trench - (RD-A-1 /4)-Z5-A014-MV | 2027-01-27 → 2027-07-22 (+176d) | 2027-02-02 → 2027-07-28 (+176d) |  |  | resources Skilled labor [60.01 h]; Unskilled Labor [120.01 h]; Equipment Opreator [180.02 h]; Excavator-Poclain [60.01 h]; Dump Truck [120.01 h]; Excavation for Trench size 60cm wide and 80cm deep ( for 2 cables) [589.14 m3]; Excavation for Trench size 120cm wide and 80cm deep (for 4 cables) [90.57 m3]; Excavation for Trench size 240cm wide and 80cm deep (for 9 cables) [137.41 m3]; Excavation for Trench size 300cm wide and 80cm deep (for 10 cables) [532.61 m3] → Skilled labor [60 h]; Unskilled Labor [120 h]; Equipment Opreator [180 h]; Excavator-Poclain [60 h]; Dump Truck [120 h]; Excavation for Trench size 60cm wide and 80cm deep ( for 2 cables) [589.14 m3]; Excavation for Trench size 120cm wide and 80cm deep (for 4 cables) [90.57 m3]; Excavation for Trench size 240cm wide and 80cm deep (for 9 cables) [137.41 m3]; Excavation for Trench size 300cm wide and 80cm deep (for 10 cables) [532.61 m3] |
| RHD4CZ5A014MV1200 | Trench Backfilling for Medium Voltage Network - (RD-A-1 /4)-Z5-A014-MV | 2027-03-18 → 2027-09-06 (+172d) | 2027-03-24 → 2027-09-12 (+172d) |  |  | resources Skilled labor [60.01 h]; Unskilled Labor [60.01 h]; Equipment Opreator [120.01 h]; Dump Truck [120.01 h]; Excavation for Trench size 60cm wide and 80cm deep ( for 2 cables) [252.49 m3]; Excavation for Trench size 120cm wide and 80cm deep (for 4 cables) [38.81 m3]; Excavation for Trench size 240cm wide and 80cm deep (for 9 cables) [58.89 m3]; Excavation for Trench size 300cm wide and 80cm deep (for 10 cables) [228.26 m3] → Skilled labor [60 h]; Unskilled Labor [60 h]; Equipment Opreator [120 h]; Dump Truck [120 h]; Excavation for Trench size 60cm wide and 80cm deep ( for 2 cables) [252.49 m3]; Excavation for Trench size 120cm wide and 80cm deep (for 4 cables) [38.81 m3]; Excavation for Trench size 240cm wide and 80cm deep (for 9 cables) [58.89 m3]; Excavation for Trench size 300cm wide and 80cm deep (for 10 cables) [228.26 m3] |
| 3683 | **RHD4-02-002-A014-(MV)-Medium Voltage duct banks** | 2026-09-01 → 2026-08-04 (-28d) | 2026-09-09 → 2027-03-22 (+194d) |  |  |  |
| RHD4CZ5A014MV2100 | Excavation of Duct Banks for Medium Voltage Network - (RD-A-1 /4)-Z5-A014-MV | 2026-09-01 → 2026-08-04 A (-28d) | 2026-09-02 → 2027-02-25 (+176d) |  | 0% → 38% |  |
| RHD4CZ5A014MV2200 | Installation of Duct Banks for Medium Voltage Network - (RD-A-1 /4)-Z5-A014-MV | 2026-09-03 → 2026-08-06 A (-28d) | 2026-09-05 → 2027-03-04 (+180d) |  | 0% → 38% |  |

| ID | Task | Start | Finish | Complete | Other |
| --- | --- | --- | --- | --- | --- |
| RHD4CZ5A014MV2300 | Pouring of Duct Banks for Medium Voltage Network - (RD-A-1 /4)-Z5-A014-MV | 2026-09-06 → 2026-08-09 A (-28d) | 2026-09-07 → 2027-03-15 (+189d) | 0% → 38% |  |
| RHD4CZ5A014MV2400 | Backfilling of Duct Banks for Medium Voltage Network - (RD-A-1 /4)-Z5-A014-MV | 2026-09-08 → 2026-08-11 A (-28d) | 2026-09-09 → 2027-03-22 (+194d) | 0% → 38% |  |
| 3684 | **RHD4-02-002-A014-(MV)-Medium Voltage cables 3Cx 500 mm²** | 2027-02-03 → 2027-07-29 (+176d) | 2027-03-08 → 2027-08-30 (+175d) |  |  |
| RHD4CZ5A014MV3100 | Installation of Medium Voltage Cables 3Cx 500 mm² - (RD-A-1 /4)-Z5-A014-MV | 2027-02-03 → 2027-07-29 (+176d) | 2027-02-16 → 2027-08-11 (+176d) |  |  |
| RHD4CZ5A014MV3200 | Joints Installation of Medium Voltage Cables 3Cx 500 mm² - (RD-A-1 /4)-Z5-A014-MV | 2027-02-17 → 2027-08-12 (+176d) | 2027-02-24 → 2027-08-18 (+175d) |  |  |
| RHD4CZ5A014MV3300 | Testing of Medium Voltage Cables 3Cx 500 mm² - (RD-A-1 /4)-Z5-A014-MV | 2027-02-25 → 2027-08-19 (+175d) | 2027-03-06 → 2027-08-28 (+175d) |  |  |
| RHD4CZ5A014MV3400 | Termination of Medium Voltage Cables 3Cx 500 mm² - (RD-A-1 /4)-Z5-A014-MV | 2027-03-07 → 2027-08-29 (+175d) | 2027-03-08 → 2027-08-30 (+175d) |  |  |
| 3685 | **RHD4-02-002-A014-(MV)-Medium Voltage cables 3Cx 50 mm²** | 2027-03-07 → 2027-08-29 (+175d) | 2027-03-13 → 2027-08-31 (+171d) |  |  |
| RHD4CZ5A014MV3401 | Termination of Medium Voltage Cables 3Cx 50 mm² - (RD-A-1 /4)-Z5-A014-MV | 2027-03-07 → 2027-08-29 (+175d) | 2027-03-13 → 2027-08-31 (+171d) |  |  |
| 3686 | **RHD4-02-002-A014-(MV)-Normally open Point (Outdoor Type)** | 2027-03-14 → 2027-09-01 (+171d) | 2027-03-17 → 2027-09-05 (+172d) |  |  |
| RHD4CZ5A014MV4100 | Installation for Normally open Point - (RD-A-1 /4)-Z5-A014-MV | 2027-03-14 → 2027-09-01 (+171d) | 2027-03-15 → 2027-09-02 (+171d) |  |  |
| RHD4CZ5A014MV4200 | Termination for Normally open Point - (RD-A-1 /4)-Z5-A014-MV | 2027-03-16 → 2027-09-04 (+172d) | 2027-03-17 → 2027-09-05 (+172d) |  |  |
| 4255 | **RHD4-02-002-Z5-A014-Low Voltage Network - LV** | 2026-09-03 → 2027-02-27 (+177d) | 2027-04-22 → 2027-10-12 (+173d) |  |  |
| 4256 | **RHD4-02-002-A014-(LV)-Low Voltage duct banks** | 2026-09-03 → 2027-02-27 (+177d) | 2026-09-24 → 2027-03-22 (+179d) |  |  |
| RHD4CZ5A014LV2100 | Excavation of Duct Banks for Low Voltage Network - (RD-A-1 /4)-Z5-A014-LV | 2026-09-03 → 2027-02-27 (+177d) | 2026-09-07 → 2027-03-02 (+176d) |  |  |
| RHD4CZ5A014LV2200 | Installation of Duct Banks for Low Voltage Network - (RD-A-1 /4)-Z5-A014-LV | 2026-09-08 → 2027-03-03 (+176d) | 2026-09-14 → 2027-03-13 (+180d) |  |  |
| RHD4CZ5A014LV2300 | Pouring of Duct Banks for Low Voltage Network - (RD-A-1 /4)-Z5-A014-LV | 2026-09-15 → 2027-03-14 (+180d) | 2026-09-19 → 2027-03-17 (+179d) |  |  |
| RHD4CZ5A014LV2400 | Backfilling of Duct Banks for Low Voltage Network - (RD-A-1 /4)-Z5-A014-LV | 2026-09-20 → 2027-03-18 (+179d) | 2026-09-24 → 2027-03-22 (+179d) |  |  |
| 4257 | **RHD4-02-002-A014-(LV)-Low Voltage Drawpit** | 2027-03-25 → 2027-09-13 (+172d) | 2027-03-29 → 2027-09-16 (+171d) |  |  |
| RHD4CZ5A014LV5100 | Excavation of Drawpit size 900x900x1000mm for Low Voltage Network - (RD-A-1 /4)-Z5-A014-LV | 2027-03-25 → 2027-09-13 (+172d) | 2027-03-27 → 2027-09-14 (+171d) |  |  |
| RHD4CZ5A014LV5200 | Installation of Drawpit size 900x900x1000mm for Low Voltage Network - (RD-A-1 /4)-Z5-A014-LV | 2027-03-28 → 2027-09-15 (+171d) | 2027-03-29 → 2027-09-16 (+171d) |  |  |
| 4258 | **RHD4-02-002-A014-(LV)-Low Voltage cables** | 2027-03-30 → 2027-09-18 (+172d) | 2027-04-19 → 2027-10-09 (+173d) |  |  |
| RHD4CZ5A014LV3100 | Excavation for Low Voltage Cables for Low Voltage Network - (RD-A-1 /4)-Z5-A014-LV | 2027-03-30 → 2027-09-18 (+172d) | 2027-04-04 → 2027-09-22 (+171d) |  |  |
| RHD4CZ5A014LV3200 | Cable Laying of Low Voltage Cables for Low Voltage Network - (RD-A-1 /4)-Z5-A014-LV | 2027-04-05 → 2027-09-25 (+173d) | 2027-04-10 → 2027-09-29 (+172d) |  | resources Skilled labor [45.19 h]; Unskilled Labor [180.78 h]; Electrician [90.39 h]; Equipment Opreator [135.58 h]; Boom Truck [45.19 h]; Cable Laying Machine [90.39 h]; Cable, Copper 4x185mm2/ CU/XLPE/PVC [202.5 m]; Cable, Copper 4x70mm2/ CU/XLPE/PVC [4.17 m]; Cable, Copper 4x50mm2/ CU/XLPE/PVC +1x25mm2 CU/PVC [211 m]; Cable, Copper 3x10mm2/ CU/XLPE/SWA/PVC [21.56 m] → Skilled labor [45.19 h]; Unskilled Labor [180.8 h]; Electrician [90.4 h]; Equipment Opreator [135.58 h]; Boom Truck [45.19 h]; Cable Laying Machine [90.4 h]; Cable, Copper 4x185mm2/ CU/XLPE/PVC [202.5 m]; Cable, Copper 4x70mm2/ CU/XLPE/PVC [4.17 m]; Cable, Copper 4x50mm2/ CU/XLPE/PVC +1x25mm2 CU/PVC [211 m]; Cable, Copper 3x10mm2/ CU/XLPE/SWA/PVC [21.56 m] |
| RHD4CZ5A014LV3300 | Warning tape and Backfill for Low Voltage Cables for Low Voltage Network - (RD-A-1 /4)-Z5-A014-LV | 2027-04-11 → 2027-09-30 (+172d) | 2027-04-15 → 2027-10-05 (+173d) |  | resources Skilled labor [45.19 h]; Unskilled Labor [180.78 h]; Electrician [90.39 h]; Equipment Opreator [45.19 h]; Boom Truck [45.19 h]; Cable, Copper 4x185mm2/ CU/XLPE/PVC [68.75 m]; Cable, Copper 4x70mm2/ CU/XLPE/PVC [1.04 m]; Cable, Copper 4x50mm2/ CU/XLPE/PVC +1x25mm2 CU/PVC [111.52 m]; Cable, Copper 3x10mm2/ CU/XLPE/SWA/PVC [5.39 m] → Skilled labor [45.19 h]; Unskilled Labor [180.8 h]; Electrician [90.4 h]; Equipment Opreator [45.19 h]; Boom Truck [45.19 h]; Cable, Copper 4x185mm2/ CU/XLPE/PVC [68.75 m]; Cable, Copper 4x70mm2/ CU/XLPE/PVC [1.04 m]; Cable, Copper 4x50mm2/ CU/XLPE/PVC +1x25mm2 CU/PVC [111.52 m]; Cable, Copper 3x10mm2/ CU/XLPE/SWA/PVC [5.39 m] |
| RHD4CZ5A014LV3400 | Testing of Low Voltage Cables for Low Voltage Network - (RD-A-1 /4)-Z5-A014-LV | 2027-04-17 → 2027-10-06 (+172d) | 2027-04-19 → 2027-10-09 (+173d) |  |  |
| 4259 | **RHD4-02-002-A014-(LV)-Low Voltage Distribution Pillars** | 2027-04-17 → 2027-10-06 (+172d) | 2027-04-22 → 2027-10-12 (+173d) |  |  |
| RHD4CZ5A014LV4100 | Leveling for Distribution Pillars for Low Voltage Network - (RD-A-1 /4)-Z5-A014-LV | 2027-04-17 → 2027-10-06 (+172d) | 2027-04-18 → 2027-10-07 (+172d) |  |  |
| RHD4CZ5A014LV4200 | Lean Concrete for Distribution Pillars for Low Voltage Network - (RD-A-1 /4)-Z5-A014-LV | 2027-04-19 → 2027-10-09 (+173d) | 2027-04-20 → 2027-10-10 (+173d) |  |  |
| RHD4CZ5A014LV4300 | Installation of Distribution Pillars for Low Voltage Network - (RD-A-1 /4)-Z5-A014-LV | 2027-04-21 → 2027-10-11 (+173d) | 2027-04-22 → 2027-10-12 (+173d) |  |  |
| 3694 | **RHD4-02-002-Z5-A014-Street Lighting Network - SL** | 2026-09-14 → 2027-03-03 (+170d) | 2027-05-31 → 2027-11-15 (+168d) |  |  |
| 3695 | **RHD4-02-002-A014-(SL)-Street Lighting duct banks** | 2026-09-14 → 2027-03-03 (+170d) | 2026-09-30 → 2027-03-22 (+173d) |  |  |
| RHD4CZ5A014SL2100 | Excavation of Duct Banks for Street Lighting Network - (RD-A-1 /4)-Z5-A014-SL | 2026-09-14 → 2027-03-03 (+170d) | 2026-09-15 → 2027-03-04 (+170d) |  |  |
| RHD4CZ5A014SL2200 | Installation of Duct Banks for Street Lighting Network - (RD-A-1 /4)-Z5-A014-SL | 2026-09-16 → 2027-03-06 (+171d) | 2026-09-20 → 2027-03-13 (+174d) |  | resources Carpenter [1.63 h]; Skilled labor [16.77 h]; Unskilled Labor [16.77 h]; Steel Fixer [1.63 h]; Road Crossing Duct for Street Lighting cables UPVC (2x?110mm) [1.54 m] → Carpenter [1.6 h]; Skilled labor [16.8 h]; Unskilled Labor [16.8 h]; Steel Fixer [1.6 h]; Road Crossing Duct for Street Lighting cables UPVC (2x?110mm) [1.54 m] |
| RHD4CZ5A014SL2300 | Pouring of Duct Banks for Street Lighting Network - (RD-A-1 /4)-Z5-A014-SL | 2026-09-21 → 2027-03-14 (+174d) | 2026-09-26 → 2027-03-17 (+172d) |  |  |
| RHD4CZ5A014SL2400 | Backfilling of Duct Banks for Street Lighting Network - (RD-A-1 /4)-Z5-A014-SL | 2026-09-27 → 2027-03-18 (+172d) | 2026-09-30 → 2027-03-22 (+173d) |  |  |
| 3696 | **RHD4-02-002-A014-(SL)-Street Lighting Drawpit** | 2027-04-24 → 2027-10-13 (+172d) | 2027-04-27 → 2027-10-17 (+173d) |  |  |
| RHD4CZ5A014SL5100 | Excavation of Drawpit size 600x600x900mm for Street Lighting Network - (RD-A-1 /4)-Z5-A014-SL | 2027-04-24 → 2027-10-13 (+172d) | 2027-04-25 → 2027-10-14 (+172d) |  |  |
| RHD4CZ5A014SL5200 | Installation of Drawpit size 600x600x900mm for Street Lighting Network - (RD-A-1 /4)-Z5-A014-SL | 2027-04-26 → 2027-10-16 (+173d) | 2027-04-27 → 2027-10-17 (+173d) |  |  |
| 3698 | **RHD4-02-002-A014-(SL)-Street Lighting Poles** | 2027-04-28 → 2027-10-18 (+173d) | 2027-05-25 → 2027-11-09 (+168d) |  |  |
| RHD4CZ5A014SL1100 | Excavation for RC Base for Lighting Poles for Street Lighting Network - (RD-A-1 /4)-Z5-A014-SL | 2027-04-28 → 2027-10-18 (+173d) | 2027-05-01 → 2027-10-20 (+172d) |  |  |
| RHD4CZ5A014SL1200 | Installation for RC Base for Lighting Poles for Street Lighting Network - (RD-A-1 /4)-Z5-A014-SL | 2027-05-02 → 2027-10-21 (+172d) | 2027-05-04 → 2027-10-24 (+173d) |  |  |
| RHD4CZ5A014SL1300 | Backfill for RC Base for Lighting Poles for Street Lighting Network - (RD-A-1 /4)-Z5-A014-SL | 2027-05-05 → 2027-10-25 (+173d) | 2027-05-08 → 2027-10-27 (+172d) |  |  |
| RHD4CZ5A014SL1400 | Installation for Lighting Poles for Street Lighting Network - (RD-A-1 /4)-Z5-A014-SL | 2027-05-09 → 2027-10-28 (+172d) | 2027-05-12 → 2027-11-01 (+173d) |  |  |
| RHD4CZ5A014SL1500 | Luminaire Installation for Lighting Poles for Street Lighting Network - (RD-A-1 /4)-Z5-A014-SL | 2027-05-20 → 2027-11-04 (+168d) | 2027-05-25 → 2027-11-09 (+168d) |  | resources Unskilled Labor [95.84 h]; Electrician [47.92 h]; Equipment Opreator [19.17 h]; Boom Truck [19.17 h]; Street Lighting( LED) Luminaire of Output ?39018 lumen [66 Unit] → Unskilled Labor [95.84 h]; Electrician [47.92 h]; Equipment Opreator [19.2 h]; Boom Truck [19.2 h]; Street Lighting( LED) Luminaire of Output ?39018 lumen [66 Unit] |
| 3697 | **RHD4-02-002-A014-(SL)-Street Lighting cables** | 2027-05-09 → 2027-10-28 (+172d) | 2027-05-31 → 2027-11-15 (+168d) |  |  |
| RHD4CZ5A014SL3100 | Excavation for Street Lighting Cables for Street Lighting Network - (RD-A-1 /4)-Z5-A014-SL | 2027-05-09 → 2027-10-28 (+172d) | 2027-05-13 → 2027-11-02 (+173d) |  |  |
| RHD4CZ5A014SL3200 | Cable Laying of Street Lighting Cables for Street Lighting Network - (RD-A-1 /4)-Z5-A014-SL | 2027-05-19 → 2027-11-03 (+168d) | 2027-05-23 → 2027-11-07 (+168d) |  |  |
| RHD4CZ5A014SL3300 | Warning tape and Backfill for Street Lighting Cables for Street Lighting Network - (RD-A-1 /4)-Z5-A014-SL | 2027-05-24 → 2027-11-08 (+168d) | 2027-05-27 → 2027-11-11 (+168d) |  |  |
| RHD4CZ5A014SL3400 | Testing of Street Lighting Cables for Street Lighting Network - (RD-A-1 /4)-Z5-A014-SL | 2027-05-29 → 2027-11-13 (+168d) | 2027-05-31 → 2027-11-15 (+168d) |  |  |
| 3700 | **RHD4-02-002-A014-(SL)-Street Lighting Earthing System** | 2027-05-13 → 2027-11-02 (+173d) | 2027-05-19 → 2027-11-03 (+168d) |  |  |
| RHD4CZ5A014SL6100 | Installation of Earthing for Lighting Poles and Fedder Pillers for Street Lighting Network - (RD-A-1 /4)-Z5-A014-SL | 2027-05-13 → 2027-11-02 (+173d) | 2027-05-19 → 2027-11-03 (+168d) |  | resources Skilled labor [0.76 h]; Unskilled Labor [0.76 h]; Equipment Opreator [1.42 h]; Excavator-Poclain [0.76 h]; Dump Truck [0.76 h]; Including lighting poles circuits - ER [1 Unit] → Skilled labor [0.8 h]; Unskilled Labor [0.8 h]; Equipment Opreator [1.42 h]; Excavator-Poclain [0.8 h]; Dump Truck [0.8 h]; Including lighting poles circuits - ER [1 Unit] |
| 3706 | **RHD4-02-002-Z5-A014-Telecommunications Network - TC** | 2027-06-01 → 2027-11-16 (+168d) | 2027-06-28 → 2027-12-13 (+168d) |  |  |
| 3707 | **RHD4-02-002-A014-(TC)-Telecommunications Ducts** | 2027-06-01 → 2027-11-16 (+168d) | 2027-06-23 → 2027-12-08 (+168d) |  |  |
| RHD4CZ5A014TC2100 | Excavation of HDPE Ducts for Telecom Network - (RD-A-1 /4)-Z5-A014-TC | 2027-06-01 → 2027-11-16 (+168d) | 2027-06-07 → 2027-11-22 (+168d) |  |  |
| RHD4CZ5A014TC2200 | Installation of HDPE Ducts for Telecom Network - (RD-A-1 /4)-Z5-A014-TC | 2027-06-08 → 2027-11-23 (+168d) | 2027-06-16 → 2027-12-01 (+168d) |  |  |
| RHD4CZ5A014TC2400 | Backfilling of HDPE Ducts for Telecom Network - (RD-A-1 /4)-Z5-A014-TC | 2027-06-17 → 2027-12-02 (+168d) | 2027-06-23 → 2027-12-08 (+168d) |  |  |
| 3708 | **RHD4-02-002-A014-(TC)-Telecommunications Manholes** | 2027-06-24 → 2027-12-09 (+168d) | 2027-06-28 → 2027-12-13 (+168d) |  |  |
| RHD4CZ5A014TC5100 | Excavation for Manholes for Telecom Network - (RD-A-1 /4)-Z5-A014-TC | 2027-06-24 → 2027-12-09 (+168d) | 2027-06-26 → 2027-12-11 (+168d) |  |  |
| RHD4CZ5A014TC5200 | Installation of Manholes for Telecom Network - (RD-A-1 /4)-Z5-A014-TC | 2027-06-27 → 2027-12-12 (+168d) | 2027-06-28 → 2027-12-13 (+168d) |  |  |
| 3710 | **RHD4-02-002-Z5-A014-Information and Communication Technologies - ICT** | 2027-06-29 → 2027-12-14 (+168d) | 2027-08-29 → 2028-02-13 (+168d) |  |  |
| 3711 | **RHD4-02-002-A014-(ICT)-Information and Communication Technologies Ducts** | 2027-06-29 → 2027-12-14 (+168d) | 2027-08-19 → 2028-02-03 (+168d) |  |  |
| RHD4CZ5A014ICT2100 | Excavation of HDPE Ducts for ICT Network - (RD-A-1 /4)-Z5-A014-ICT | 2027-06-29 → 2027-12-14 (+168d) | 2027-07-13 → 2027-12-28 (+168d) |  |  |
| RHD4CZ5A014ICT2200 | Installation of HDPE Ducts for ICT Network - (RD-A-1 /4)-Z5-A014-ICT | 2027-07-14 → 2027-12-29 (+168d) | 2027-08-04 → 2028-01-19 (+168d) |  |  |
| RHD4CZ5A014ICT2400 | Backfilling of HDPE Ducts for ICT Network - (RD-A-1 /4)-Z5-A014-ICT | 2027-08-05 → 2028-01-20 (+168d) | 2027-08-19 → 2028-02-03 (+168d) |  |  |
| 3712 | **RHD4-02-002-A014-(ICT)-Information and Communication Technologies Manholes** | 2027-08-21 → 2028-02-05 (+168d) | 2027-08-29 → 2028-02-13 (+168d) |  |  |
| RHD4CZ5A014ICT5100 | Excavation for Manholes for ICT Network - (RD-A-1 /4)-Z5-A014-ICT | 2027-08-21 → 2028-02-05 (+168d) | 2027-08-24 → 2028-02-08 (+168d) |  |  |
| RHD4CZ5A014ICT5200 | Installation of Manholes for ICT Network - (RD-A-1 /4)-Z5-A014-ICT | 2027-08-25 → 2028-02-09 (+168d) | 2027-08-29 → 2028-02-13 (+168d) |  |  |
| 3714 | **RHD4-02-002-Z5-A014-Security Network - CCTV** | 2027-08-30 → 2028-02-14 (+168d) | 2027-09-09 → 2028-02-26 (+170d) |  |  |
| 2959 | **RHD4-02-002-A014-(CCTV)-CCTV Poles** | 2027-08-30 → 2028-02-14 (+168d) | 2027-09-09 → 2028-02-26 (+170d) |  |  |

| ID | Task | Start | Finish | Duration | Complete | Other |
| --- | --- | --- | --- | --- | --- | --- |
| RHD4CZ5A014CCTV1100 | Excavation for RC Base for CCTV Poles for Security Network - (RD-A-1 /4)-Z5-A014-CCTV | 2027-08-30 → 2028-02-14 (+168d) | 2027-08-31 → 2028-02-15 (+168d) |  |  | resources Skilled labor [4.32 h]; Unskilled Labor [4.32 h]; Equipment Opreator [8.64 h]; Excavator-Poclain [2.18 h]; Dump Truck [2.18 h]; 25 Meters pole for CCTV Cameras [0.2 nr] → Skilled labor [4.32 h]; Unskilled Labor [4.32 h]; Equipment Opreator [8.64 h]; Excavator-Poclain [2.16 h]; Dump Truck [2.16 h]; 25 Meters pole for CCTV Cameras [0.2 nr] |
| RHD4CZ5A014CCTV1200 | Installation for RC Base for CCTV Poles for Security Network - (RD-A-1 /4)-Z5-A014-CCTV | 2027-09-01 → 2028-02-16 (+168d) | 2027-09-02 → 2028-02-17 (+168d) |  |  | resources Skilled labor [4.32 h]; Unskilled Labor [4.32 h]; Equipment Opreator [8.64 h]; Excavator-Poclain [2.18 h]; Dump Truck [2.18 h]; 25 Meters pole for CCTV Cameras [0.5 nr] → Skilled labor [4.32 h]; Unskilled Labor [4.32 h]; Equipment Opreator [8.64 h]; Excavator-Poclain [2.16 h]; Dump Truck [2.16 h]; 25 Meters pole for CCTV Cameras [0.5 nr] |
| RHD4CZ5A014CCTV1300 | Backfill for RC Base for CCTV Poles for Security Network - (RD-A-1 /4)-Z5-A014-CCTV | 2027-09-04 → 2028-02-19 (+168d) | 2027-09-05 → 2028-02-21 (+169d) | 2d → 2.03d |  | resources Skilled labor [2.88 h]; Unskilled Labor [2.88 h]; Equipment Opreator [5.44 h]; Excavator-Poclain [1.42 h]; Dump Truck [1.42 h]; 25 Meters pole for CCTV Cameras [0.1 nr] → Skilled labor [2.88 h]; Unskilled Labor [2.88 h]; Equipment Opreator [5.44 h]; Excavator-Poclain [1.44 h]; Dump Truck [1.44 h]; 25 Meters pole for CCTV Cameras [0.1 nr] |
| RHD4CZ5A014CCTV1400 | Installation for CCTV Poles for Security Network - (RD-A-1 /4)-Z5-A014-CCTV | 2027-09-06 → 2028-02-21 (+168d) | 2027-09-07 → 2028-02-24 (+170d) |  |  | resources Skilled labor [7.2 h]; Unskilled Labor [14.56 h]; Electrician [7.2 h]; Equipment Opreator [7.2 h]; Boom Truck [3.59 h]; 25 Meters pole for CCTV Cameras [1.2 nr] → Skilled labor [7.2 h]; Unskilled Labor [14.56 h]; Electrician [7.2 h]; Equipment Opreator [7.2 h]; Boom Truck [3.6 h]; 25 Meters pole for CCTV Cameras [1.2 nr] |
| RHD4CZ5A014CCTV1500 | Protection post Installation for CCTV Poles for Security Network - (RD-A-1 /4)-Z5-A014-CCTV | 2027-09-08 → 2028-02-24 (+169d) | 2027-09-09 → 2028-02-26 (+170d) |  |  |  |
| 3353 | **RHD4-02-002-Z5-L07** | 2026-07-12 → 2026-06-03 (-39d) | 2027-12-15 → 2028-07-13 (+211d) |  |  |  |
| 3532 | **RHD4-02-002-Z5-L07-Road Works - RD** | 2026-08-30 → 2026-06-03 (-88d) | 2027-12-15 → 2028-07-13 (+211d) |  |  |  |
| 3533 | **RHD4-02-002-L07-(RD)-Subgrade** | 2026-08-30 → 2026-06-03 (-88d) | 2026-09-03 → 2026-08-03 (-31d) |  |  |  |
| RHD4CZ5L07RD1100 | Supply, lay and compaction subgrade compacted thickness 300 mm for Roads - (RD-L-7)-Z5-L07-RD(Completed) | 2026-08-30 → 2026-06-03 A (-88d) | 2026-09-03 → 2026-08-03 A (-31d) |  | 0% → 100% | resources Skilled labor [129.6 h]; Unskilled Labor [259.19 h]; Electrician [129.6 h]; Equipment Opreator [885.06 h]; Water Truck [42.8 h]; Roller compactor [64.8 h]; Grader [129.6 h]; Dump Truck [647.98 h]; Subgrade [6929.62 m3] → Skilled labor [129.6 h]; Unskilled Labor [259.2 h]; Electrician [129.6 h]; Equipment Opreator [885.06 h]; Water Truck [42.8 h]; Roller compactor [64.8 h]; Grader [129.6 h]; Dump Truck [648 h]; Subgrade [6929.62 m3] |
| 3534 | **RHD4-02-002-L07-(RD)-Aggregate Base Course** | 2026-09-05 → 2026-10-13 (+38d) | 2026-09-10 → 2027-03-08 (+179d) |  |  |  |
| RHD4CZ5L07RD2100 | Supply, lay and compaction Aggregate base course compacted thickness 300 mmfor Roads - (RD-L-7)-Z5-L07-RD | 2026-09-05 → 2026-10-13 A (+38d) | 2026-09-10 → 2027-03-08 (+179d) | 6d → 10d | 0% → 50% | resources Skilled labor [53.36 h]; Unskilled Labor [106.73 h]; Equipment Opreator [675.53 h]; Water Truck [35.18 h]; Roller compactor [106.73 h]; Grader [106.73 h]; Dump Truck [426.9 h]; Aggregate Base Courses [4352.5 m3] → Skilled labor [53.36 h]; Unskilled Labor [106.73 h]; Equipment Opreator [675.53 h]; Water Truck [35.2 h]; Roller compactor [106.73 h]; Grader [106.73 h]; Dump Truck [426.9 h]; Aggregate Base Courses [4352.5 m3] |
| 3535 | **RHD4-02-002-L07-(RD)-Bituminous base course Two Layers, including (MC1)&(RC2)** | 2026-09-12 → 2027-03-13 (+182d) | 2027-11-18 → 2028-06-17 (+212d) |  |  |  |
| RHD4CZ5L07RD3100 | Supply, lay and Asphaltic base course including Prime Coat (MC1) for 1st Layer - (RD-L-7)-Z5-L07-RD | 2026-09-12 → 2027-03-13 (+182d) | 2026-09-13 → 2027-03-14 (+182d) |  |  |  |
| RHD4CZ5L07RD3200 | Supply, lay and Asphaltic base course including Tack Coat (RC2) for 2nd Layer - (RD-L-7)-Z5-L07-RD | 2027-11-17 → 2028-06-15 (+211d) | 2027-11-18 → 2028-06-17 (+212d) |  |  |  |
| 3537 | **RHD4-02-002-L07-(RD)-Precast Concrete Curb** | 2027-11-20 → 2028-06-18 (+211d) | 2027-11-25 → 2028-06-24 (+212d) |  |  |  |
| RHD4CZ5L07RD5100 | Supply and installation Precast Concrete Kerb for Roads - (RD-L-7)-Z5-L07-RD | 2027-11-20 → 2028-06-18 (+211d) | 2027-11-25 → 2028-06-24 (+212d) |  |  |  |
| 3540 | **RHD4-02-002-L07-(RD)-Traffic Signage** | 2027-11-27 → 2028-06-25 (+211d) | 2027-12-02 → 2028-07-01 (+212d) |  |  |  |
| RHD4CZ5L07RD8100 | Installation of Traffic Signage for Road Network - (RD-L-7)-Z5-L07-RD | 2027-11-27 → 2028-06-25 (+211d) | 2027-12-02 → 2028-07-01 (+212d) |  |  | resources Skilled labor [130.68 h]; Unskilled Labor [65.34 h]; Electrician [17.42 h]; Equipment Opreator [20.04 h]; Boom Truck [13.07 h]; Concrete Mixer Truck [6.97 h]; Traffic signs, ground mounted, 1 Sheet Aluminium, (breakaway)Single post [14 nr]; Traffic signs, ground mounted, 1 Sheets Aluminium, (breakaway)Double post [1 nr] → Skilled labor [130.68 h]; Unskilled Labor [65.34 h]; Electrician [17.42 h]; Equipment Opreator [20 h]; Boom Truck [13.07 h]; Concrete Mixer Truck [6.97 h]; Traffic signs, ground mounted, 1 Sheet Aluminium, (breakaway)Single post [14 nr]; Traffic signs, ground mounted, 1 Sheets Aluminium, (breakaway)Double post [1 nr] |
| 3538 | **RHD4-02-002-L07-(RD)-Precast Interlocking Block Pavers** | 2027-12-04 → 2028-07-02 (+211d) | 2027-12-09 → 2028-07-08 (+212d) |  |  |  |
| RHD4CZ5L07RD6100 | Interlocking block pavers for sidewalk-footpath for Side walks and Parking areas - (RD-L-7)-Z5-L07-RD | 2027-12-04 → 2028-07-02 (+211d) | 2027-12-09 → 2028-07-08 (+212d) |  |  |  |
| 3536 | **RHD4-02-002-L07-(RD)-Bituminous concrete wearing course including tack coat (RC2)** | 2027-12-11 → 2028-07-09 (+211d) | 2027-12-12 → 2028-07-10 (+211d) |  |  |  |
| RHD4CZ5L07RD4100 | Supply, lay and compaction Asphaltic wearing course including tack Coat (RC2)for Road Network - (RD-L-7)-Z5-L07-RD | 2027-12-11 → 2028-07-09 (+211d) | 2027-12-12 → 2028-07-10 (+211d) |  |  |  |
| 3539 | **RHD4-02-002-L07-(RD)-Pavement Marking** | 2027-12-13 → 2028-07-11 (+211d) | 2027-12-15 → 2028-07-13 (+211d) |  |  |  |
| RHD4CZ5L07RD7100 | Pavement Markings for Road Network - (RD-L-7)-Z5-L07-RD | 2027-12-13 → 2028-07-11 (+211d) | 2027-12-15 → 2028-07-13 (+211d) |  |  |  |
| 3357 | **RHD4-02-002-Z5-L07-Storm Network - ST** |  | 2026-08-25 → 2027-01-16 (+144d) |  |  |  |
| 3375 | **RHD4-02-002-L07-(ST)-MH Works - 1500 mm diameter** |  | 2026-07-25 → 2027-01-04 (+163d) |  |  |  |
| RHD4CZ5L07ST3101 | Excavation and PC Blinding works for MH 1500 mm - (RD-L-7)-Z5-L07-ST | 2026-07-12 A | 2026-07-13 → 2026-08-06 A (+24d) |  | 0% → 100% |  |
| RHD4CZ5L07ST3201 | Installation of Base for MH 1500 mm - (RD-L-7)-Z5-L07-ST | 2026-07-14 A | 2026-07-18 → 2026-09-22 A (+66d) |  | 0% → 100% |  |
| RHD4CZ5L07ST3301 | MH Ring and C.Slab works and Backfilling works for MH 1500 mm - (RD-L-7)-Z5-L07-ST | 2026-07-19 → 2026-10-27 A (+100d) | 2026-07-20 → 2026-10-28 A (+100d) |  | 0% → 100% |  |
| RHD4CZ5L07ST3401 | Steel Cover for MH 1500 mm - (RD-L-7)-Z5-L07-ST | 2026-07-21 → 2026-12-31 (+163d) | 2026-07-22 → 2027-01-02 (+164d) |  |  |  |
| RHD4CZ5L07ST3501 | Finishing, Benching, Testing works for MH 1500 mm - (RD-L-7)-Z5-L07-ST | 2026-07-23 → 2027-01-03 (+164d) | 2026-07-25 → 2027-01-04 (+163d) |  |  |  |
| 3376 | **RHD4-02-002-L07-(ST)-MH Works - 2000 mm diameter** |  | 2026-08-04 → 2027-01-06 (+155d) |  |  |  |
| RHD4CZ5L07ST3102 | Excavation and PC Blinding works for MH 2000 mm - (RD-L-7)-Z5-L07-ST | 2026-07-14 A | 2026-07-19 → 2026-08-08 A (+20d) |  | 0% → 100% |  |
| RHD4CZ5L07ST3202 | Installation of Base for MH 2000 mm - (RD-L-7)-Z5-L07-ST | 2026-07-20 → 2026-08-09 A (+20d) | 2026-07-23 → 2026-10-27 A (+96d) |  | 0% → 100% |  |
| RHD4CZ5L07ST3302 | MH Ring and C.Slab works and Backfilling works for MH 2000 mm - (RD-L-7)-Z5-L07-ST | 2026-07-25 → 2026-10-28 A (+95d) | 2026-07-28 → 2026-11-01 A (+96d) |  | 0% → 100% |  |
| RHD4CZ5L07ST3402 | Steel Cover for MH 2000 mm - (RD-L-7)-Z5-L07-ST | 2026-07-29 → 2026-12-31 (+155d) | 2026-08-01 → 2027-01-03 (+155d) |  |  |  |
| RHD4CZ5L07ST3502 | Finishing, Benching, Testing works for MH 2000 mm - (RD-L-7)-Z5-L07-ST | 2026-08-02 → 2027-01-04 (+155d) | 2026-08-04 → 2027-01-06 (+155d) |  |  |  |
| 3374 | **RHD4-02-002-L07-(ST)-MH Works - 1200 mm diameter** |  | 2026-07-30 → 2027-01-04 (+158d) |  |  |  |
| RHD4CZ5L07ST3100 | Excavation and PC Blinding works for MH 1200 mm - (RD-L-7)-Z5-L07-ST | 2026-07-20 A | 2026-07-21 → 2026-08-10 A (+20d) |  | 0% → 100% |  |
| RHD4CZ5L07ST3200 | Installation of Base for MH 1200 mm - (RD-L-7)-Z5-L07-ST | 2026-07-22 A | 2026-07-23 → 2026-09-20 A (+59d) |  | 0% → 100% |  |
| RHD4CZ5L07ST3300 | MH Ring and C.Slab works and Backfilling works for MH 1200 mm - (RD-L-7)-Z5-L07-ST | 2026-07-25 → 2026-10-27 A (+94d) | 2026-07-26 → 2026-10-28 A (+94d) |  | 0% → 100% |  |
| RHD4CZ5L07ST3400 | Steel Cover for MH 1200 mm - (RD-L-7)-Z5-L07-ST | 2026-07-27 → 2026-12-31 (+157d) | 2026-07-28 → 2027-01-02 (+158d) |  |  |  |
| RHD4CZ5L07ST3500 | Finishing, Benching, Testing works for MH 1200 mm - (RD-L-7)-Z5-L07-ST | 2026-07-29 → 2027-01-03 (+158d) | 2026-07-30 → 2027-01-04 (+158d) |  |  |  |
| 3366 | **RHD4-02-002-L07-(ST)-GRP Pipes - 1200 mm diameter** |  | 2026-08-06 → 2027-01-02 (+149d) |  |  |  |
| RHD4CZ5L07ST1108 | Excavation works for GRP Pipe Line 1200 mm - (RD-L-7)-Z5-L07-ST | 2026-07-25 A | 2026-07-28 → 2026-08-05 A (+8d) |  | 0% → 100% |  |
| RHD4CZ5L07ST1208 | Bedding works for GRP Pipe Line 1200 mm - (RD-L-7)-Z5-L07-ST | 2026-07-29 A | 2026-07-30 → 2026-08-08 A (+9d) |  | 0% → 100% |  |
| RHD4CZ5L07ST1308 | Installing for GRP Pipe Line 1200 mm - (RD-L-7)-Z5-L07-ST | 2026-08-01 A | 2026-08-02 → 2026-08-10 A (+8d) |  | 0% → 100% |  |
| RHD4CZ5L07ST1508 | Backfilling and warning tape works for GRP Pipe Line 1200 mm - (RD-L-7)-Z5-L07-ST | 2026-08-05 A | 2026-08-06 → 2026-09-26 A (+51d) |  | 0% → 100% |  |
| RHD4CZ5L07ST1408 | Primary Test for GRP Pipe Line 1200 mm - (RD-L-7)-Z5-L07-ST | 2026-08-03 → 2026-12-31 (+150d) | 2026-08-04 → 2027-01-02 (+151d) |  |  |  |
| 3365 | **RHD4-02-002-L07-(ST)-GRP Pipes - 1100 mm diameter** |  | 2026-08-11 → 2027-01-02 (+144d) |  |  |  |
| RHD4CZ5L07ST1107 | Excavation works for GRP Pipe Line 1100 mm - (RD-L-7)-Z5-L07-ST | 2026-07-29 A | 2026-08-02 → 2026-08-05 A (+3d) |  | 0% → 100% |  |
| RHD4CZ5L07ST1207 | Bedding works for GRP Pipe Line 1100 mm - (RD-L-7)-Z5-L07-ST | 2026-08-03 A | 2026-08-04 → 2026-08-08 A (+4d) |  | 0% → 100% |  |
| RHD4CZ5L07ST1307 | Installing for GRP Pipe Line 1100 mm - (RD-L-7)-Z5-L07-ST | 2026-08-05 A | 2026-08-06 → 2026-08-10 A (+4d) |  | 0% → 100% |  |
| RHD4CZ5L07ST1507 | Backfilling and warning tape works for GRP Pipe Line 1100 mm - (RD-L-7)-Z5-L07-ST | 2026-08-10 A | 2026-08-11 → 2026-09-26 A (+46d) |  | 0% → 100% |  |
| RHD4CZ5L07ST1407 | Primary Test for GRP Pipe Line 1100 mm - (RD-L-7)-Z5-L07-ST | 2026-08-08 → 2026-12-31 (+145d) | 2026-08-09 → 2027-01-02 (+146d) |  |  |  |
| 3364 | **RHD4-02-002-L07-(ST)-GRP Pipes - 1000 mm diameter** | 2026-08-03 → 2026-08-04 (+1d) | 2026-08-16 → 2027-01-04 (+141d) |  |  |  |
| RHD4CZ5L07ST1106 | Excavation works for GRP Pipe Line 1000 mm - (RD-L-7)-Z5-L07-ST | 2026-08-03 → 2026-08-04 A (+1d) | 2026-08-06 → 2026-08-05 A (-1d) |  | 0% → 100% |  |
| RHD4CZ5L07ST1206 | Bedding works for GRP Pipe Line 1000 mm - (RD-L-7)-Z5-L07-ST | 2026-08-08 A | 2026-08-09 → 2026-09-16 A (+38d) |  | 0% → 100% |  |
| RHD4CZ5L07ST1306 | Installing for GRP Pipe Line 1000 mm - (RD-L-7)-Z5-L07-ST | 2026-08-10 A | 2026-08-11 → 2026-09-19 A (+39d) |  | 0% → 100% |  |
| RHD4CZ5L07ST1406 | Primary Test for GRP Pipe Line 1000 mm - (RD-L-7)-Z5-L07-ST | 2026-08-12 → 2026-12-31 (+141d) | 2026-08-13 → 2027-01-02 (+142d) |  |  |  |
| RHD4CZ5L07ST1506 | Backfilling and warning tape works for GRP Pipe Line 1000 mm - (RD-L-7)-Z5-L07-ST | 2026-08-15 → 2027-01-03 (+141d) | 2026-08-16 → 2027-01-04 (+141d) |  |  |  |
| 3361 | **RHD4-02-002-L07-(ST)-GRP Pipes - 700 mm diameter** | 2026-08-08 → 2026-08-04 (-4d) | 2026-08-18 → 2027-01-06 (+141d) |  |  |  |
| RHD4CZ5L07ST1103 | Excavation works for GRP Pipe Line 700 mm - (RD-L-7)-Z5-L07-ST | 2026-08-08 → 2026-08-04 A (-4d) | 2026-08-09 → 2026-08-05 A (-4d) |  | 0% → 100% |  |
| RHD4CZ5L07ST1203 | Bedding works for GRP Pipe Line 700 mm - (RD-L-7)-Z5-L07-ST | 2026-08-10 → 2026-08-06 A (-4d) | 2026-08-11 → 2026-08-08 A (-3d) |  | 0% → 100% |  |
| RHD4CZ5L07ST1303 | Installing for GRP Pipe Line 700 mm - (RD-L-7)-Z5-L07-ST | 2026-08-12 → 2026-08-09 A (-3d) | 2026-08-13 → 2026-08-10 A (-3d) |  | 0% → 100% |  |
| RHD4CZ5L07ST1403 | Primary Test for GRP Pipe Line 700 mm - (RD-L-7)-Z5-L07-ST | 2026-08-15 → 2026-12-31 (+138d) | 2026-08-16 → 2027-01-02 (+139d) |  |  |  |
| RHD4CZ5L07ST1503 | Backfilling and warning tape works for GRP Pipe Line 700 mm - (RD-L-7)-Z5-L07-ST | 2026-08-17 → 2027-01-05 (+141d) | 2026-08-18 → 2027-01-06 (+141d) |  |  |  |
| 3360 | **RHD4-02-002-L07-(ST)-GRP Pipes - 600 mm diameter** | 2026-08-10 → 2026-08-04 (-6d) | 2026-08-20 → 2027-01-02 (+135d) |  |  |  |
| RHD4CZ5L07ST1102 | Excavation works for GRP Pipe Line 600 mm - (RD-L-7)-Z5-L07-ST | 2026-08-10 → 2026-08-04 A (-6d) | 2026-08-11 → 2026-08-05 A (-6d) |  | 0% → 100% | resources Skilled labor [5.34 h]; Unskilled Labor [5.34 h]; Equipment Opreator [6.43 h]; Excavator-Poclain [5.34 h]; Dump Truck [1.09 h]; GRP (600mm Diameter) - ST - Depth: 1.51m - 2.5m [14.67 m] → Skilled labor [5.34 h]; Unskilled Labor [5.34 h]; Equipment Opreator [6.4 h]; Excavator-Poclain [5.34 h]; Dump Truck [1.09 h]; GRP (600mm Diameter) - ST - Depth: 1.51m - 2.5m [14.67 m] |
| RHD4CZ5L07ST1202 | Bedding works for GRP Pipe Line 600 mm - (RD-L-7)-Z5-L07-ST | 2026-08-12 → 2026-08-06 A (-6d) | 2026-08-13 → 2026-08-08 A (-5d) |  | 0% → 100% |  |

| ID | Task | Start | Finish | Duration | Complete | Other |
| --- | --- | --- | --- | --- | --- | --- |
| RHD4CZ5L07ST1302 | Installing for GRP Pipe Line 600 mm - (RD-L-7)-Z5-L07-ST | 2026-08-15 → 2026-08-09 A (-6d) | 2026-08-16 → 2026-08-10 A (-6d) |  | 0% → 100% |  |
| RHD4CZ5L07ST1502 | Backfilling and warning tape works for GRP Pipe Line 600 mm - (RD-L-7)-Z5-L07-ST | 2026-08-19 A | 2026-08-20 → 2026-10-01 A (+42d) |  | 0% → 100% |  |
| RHD4CZ5L07ST1402 | Primary Test for GRP Pipe Line 600 mm - (RD-L-7)-Z5-L07-ST | 2026-08-17 → 2026-12-31 (+136d) | 2026-08-18 → 2027-01-02 (+137d) |  |  |  |
| 3359 | **RHD4-02-002-L07-(ST)-GRP Pipes - 500 mm diameter** | 2026-08-12 → 2026-08-04 (-8d) | 2026-08-23 → 2027-01-09 (+139d) |  |  |  |
| RHD4CZ5L07ST1101 | Excavation works for GRP Pipe Line 500 mm - (RD-L-7)-Z5-L07-ST | 2026-08-12 → 2026-08-04 A (-8d) | 2026-08-13 → 2026-08-05 A (-8d) |  | 0% → 100% | resources Skilled labor [9.58 h]; Unskilled Labor [9.58 h]; Equipment Opreator [11.43 h]; Excavator-Poclain [9.58 h]; Dump Truck [1.96 h]; GRP (500mm Diameter) - ST - Depth less than 1.5 m [17.56 m]; GRP (500mm Diameter) - ST - Depth: 1.51m - 2.5m → Skilled labor [9.6 h]; Unskilled Labor [9.6 h]; Equipment Opreator [11.43 h]; Excavator-Poclain [9.6 h]; Dump Truck [1.96 h]; GRP (500mm Diameter) - ST - Depth less than 1.5 m [17.56 m]; GRP (500mm Diameter) - ST - Depth: 1.51m - 2.5m |
| RHD4CZ5L07ST1201 | Bedding works for GRP Pipe Line 500 mm - (RD-L-7)-Z5-L07-ST | 2026-08-15 → 2026-08-06 A (-9d) | 2026-08-16 → 2026-08-08 A (-8d) |  | 0% → 100% | resources Skilled labor [9.58 h]; Unskilled Labor [19.17 h]; Equipment Opreator [19.17 h]; Excavator-Poclain [9.58 h]; Dump Truck [9.58 h]; GRP (500mm Diameter) - ST - Depth less than 1.5 m [8.78 m]; GRP (500mm Diameter) - ST - Depth: 1.51m - 2.5m → Skilled labor [9.6 h]; Unskilled Labor [19.2 h]; Equipment Opreator [19.2 h]; Excavator-Poclain [9.6 h]; Dump Truck [9.6 h]; GRP (500mm Diameter) - ST - Depth less than 1.5 m [8.78 m]; GRP (500mm Diameter) - ST - Depth: 1.51m - 2.5m |
| RHD4CZ5L07ST1301 | Installing for GRP Pipe Line 500 mm - (RD-L-7)-Z5-L07-ST | 2026-08-17 → 2026-08-09 A (-8d) | 2026-08-18 → 2026-08-22 A (+4d) |  | 0% → 100% | resources Unskilled Labor [19.17 h]; Plumber [9.58 h]; GRP (500mm Diameter) - ST - Depth less than 1.5 m [79.01 m]; GRP (500mm Diameter) - ST - Depth: 1.51m - 2.5m → Unskilled Labor [19.2 h]; Plumber [9.6 h]; GRP (500mm Diameter) - ST - Depth less than 1.5 m [79.01 m]; GRP (500mm Diameter) - ST - Depth: 1.51m - 2.5m |
| RHD4CZ5L07ST1401 | Primary Test for GRP Pipe Line 500 mm - (RD-L-7)-Z5-L07-ST | 2026-08-19 → 2026-12-31 (+134d) | 2026-08-20 → 2027-01-02 (+135d) |  |  | resources Unskilled Labor [9.58 h]; Plumber [9.58 h]; Equipment Opreator [9.58 h]; Water Truck [9.58 h]; GRP (500mm Diameter) - ST - Depth less than 1.5 m [35.12 m]; GRP (500mm Diameter) - ST - Depth: 1.51m - 2.5m → Unskilled Labor [9.6 h]; Plumber [9.6 h]; Equipment Opreator [9.6 h]; Water Truck [9.6 h]; GRP (500mm Diameter) - ST - Depth less than 1.5 m [35.12 m]; GRP (500mm Diameter) - ST - Depth: 1.51m - 2.5m |
| RHD4CZ5L07ST1501 | Backfilling and warning tape works for GRP Pipe Line 500 mm - (RD-L-7)-Z5-L07-ST | 2026-08-22 → 2027-01-07 (+138d) | 2026-08-23 → 2027-01-09 (+139d) |  |  | resources Skilled labor [9.58 h]; Unskilled Labor [19.17 h]; Equipment Opreator [19.17 h]; Excavator-Poclain [9.58 h]; Dump Truck [9.58 h]; GRP (500mm Diameter) - ST - Depth less than 1.5 m [35.12 m]; GRP (500mm Diameter) - ST - Depth: 1.51m - 2.5m → Skilled labor [9.6 h]; Unskilled Labor [19.2 h]; Equipment Opreator [19.2 h]; Excavator-Poclain [9.6 h]; Dump Truck [9.6 h]; GRP (500mm Diameter) - ST - Depth less than 1.5 m [35.12 m]; GRP (500mm Diameter) - ST - Depth: 1.51m - 2.5m |
| 3373 | **RHD4-02-002-L07-(ST)-UPVC Pipes - 400 mm diameter** | 2026-08-09 → 2027-01-03 (+147d) | 2026-08-19 → 2027-01-13 (+147d) |  |  |  |
| RHD4CZ5L07ST2101 | Excavation works for UPVC Pipe Line 400 mm - (RD-L-7)-Z5-L07-ST | 2026-08-09 → 2027-01-03 (+147d) | 2026-08-10 → 2027-01-04 (+147d) |  |  |  |
| RHD4CZ5L07ST2201 | Bedding works for UPVC Pipe Line 400 mm - (RD-L-7)-Z5-L07-ST | 2026-08-11 → 2027-01-05 (+147d) | 2026-08-12 → 2027-01-06 (+147d) |  |  |  |
| RHD4CZ5L07ST2301 | Installing for UPVC Pipe Line 400 mm - (RD-L-7)-Z5-L07-ST | 2026-08-13 → 2027-01-07 (+147d) | 2026-08-15 → 2027-01-09 (+147d) |  |  |  |
| RHD4CZ5L07ST2401 | Primary Test for UPVC Pipe Line 400 mm - (RD-L-7)-Z5-L07-ST | 2026-08-16 → 2027-01-10 (+147d) | 2026-08-17 → 2027-01-11 (+147d) |  |  |  |
| RHD4CZ5L07ST2501 | Backfilling and warning tape works for UPVC Pipe Line 400 mm - (RD-L-7)-Z5-L07-ST | 2026-08-18 → 2027-01-12 (+147d) | 2026-08-19 → 2027-01-13 (+147d) |  |  |  |
| 3372 | **RHD4-02-002-L07-(ST)-UPVC Pipes - 300 mm diameter** | 2026-08-11 → 2026-08-04 (-7d) | 2026-08-25 → 2027-01-16 (+144d) |  |  |  |
| RHD4CZ5L07ST2100 | Excavation works for UPVC Pipe Line 300 mm - (RD-L-7)-Z5-L07-ST | 2026-08-11 → 2026-08-04 A (-7d) | 2026-08-12 → 2026-09-19 A (+38d) |  | 0% → 100% |  |
| RHD4CZ5L07ST2200 | Bedding works for UPVC Pipe Line 300 mm - (RD-L-7)-Z5-L07-ST | 2026-08-13 A | 2026-08-15 → 2026-09-20 A (+36d) |  | 0% → 100% |  |
| RHD4CZ5L07ST2300 | Installing for UPVC Pipe Line 300 mm - (RD-L-7)-Z5-L07-ST | 2026-08-16 A | 2026-08-17 → 2026-09-22 A (+36d) |  | 0% → 100% |  |
| RHD4CZ5L07ST2400 | Primary Test for UPVC Pipe Line 300 mm - (RD-L-7)-Z5-L07-ST | 2026-08-18 → 2027-01-10 (+145d) | 2026-08-19 → 2027-01-11 (+145d) |  |  |  |
| RHD4CZ5L07ST2500 | Backfilling and warning tape works for UPVC Pipe Line 300 mm - (RD-L-7)-Z5-L07-ST | 2026-08-24 → 2027-01-14 (+143d) | 2026-08-25 → 2027-01-16 (+144d) |  |  |  |
| 3380 | **RHD4-02-002-L07-(ST)-Concrete Encasement** | 2026-08-16 → 2027-01-10 (+147d) | 2026-08-17 → 2027-01-11 (+147d) |  |  |  |
| RHD4CZ5L07ST6100 | Pipe Encasement for Storm Pipelines - (RD-L-7)-Z5-L07-ST | 2026-08-16 → 2027-01-10 (+147d) | 2026-08-17 → 2027-01-11 (+147d) |  |  |  |
| 3381 | **RHD4-02-002-Z5-L07-Catch Basin - ST** |  | 2026-08-15 → 2027-01-09 (+147d) |  |  |  |
| 3382 | **RHD4-02-002-L07-(ST)-Single Catch Basin Works** |  | 2026-08-15 → 2027-01-09 (+147d) |  |  |  |
| RHD4CZ5L07ST7100 | Excavation works for Single Catch Basin - (RD-L-7)-Z5-L07-ST | 2026-07-27 A | 2026-07-29 → 2026-08-06 A (+8d) |  | 0% → 100% | resources Skilled labor [25.05 h]; Unskilled Labor [50.1 h]; Equipment Opreator [37.57 h]; Excavator-Poclain [25.05 h]; Dump Truck [12.52 h]; Single Catch basin - ST [5.75 nr] → Skilled labor [25.05 h]; Unskilled Labor [50.1 h]; Equipment Opreator [37.6 h]; Excavator-Poclain [25.05 h]; Dump Truck [12.52 h]; Single Catch basin - ST [5.75 nr] |
| RHD4CZ5L07ST7200 | PC Blinding, Installation and Pipe connection for Single Catch Basin - (RD-L-7)-Z5-L07-ST | 2026-07-30 A | 2026-08-02 → 2026-09-21 A (+50d) |  | 0% → 100% |  |
| RHD4CZ5L07ST7300 | Rings & C.Slab & Final Backfill for Single Catch Basin - (RD-L-7)-Z5-L07-ST | 2026-08-03 → 2026-10-27 A (+85d) | 2026-08-05 → 2026-10-29 A (+85d) |  | 0% → 100% | resources Skilled labor [31.36 h]; Unskilled Labor [62.62 h]; Equipment Opreator [37.57 h]; Boom Truck [6.21 h]; Bobcat [31.36 h]; Single Catch basin - ST [8.05 nr] → Skilled labor [31.36 h]; Unskilled Labor [62.62 h]; Equipment Opreator [37.6 h]; Boom Truck [6.21 h]; Bobcat [31.36 h]; Single Catch basin - ST [8.05 nr] |
| RHD4CZ5L07ST7400 | Steel Cover for Single Catch Basin - (RD-L-7)-Z5-L07-ST | 2026-08-06 → 2026-12-31 (+147d) | 2026-08-09 → 2027-01-03 (+147d) |  |  |  |
| RHD4CZ5L07ST7500 | Finishing and Insulation works for Single Catch Basin - (RD-L-7)-Z5-L07-ST | 2026-08-10 → 2027-01-04 (+147d) | 2026-08-15 → 2027-01-09 (+147d) |  |  |  |
| 3383 | **RHD4-02-002-L07-(ST)-Double Catch Basin Works** |  | 2026-08-12 → 2027-01-06 (+147d) |  |  |  |
| RHD4CZ5L07ST8100 | Excavation works for Double Catch Basin - (RD-L-7)-Z5-L07-ST | 2026-07-30 A | 2026-08-01 → 2026-08-06 A (+5d) |  | 0% → 100% |  |
| RHD4CZ5L07ST8200 | PC Blinding, Installation and Pipe connection for Double Catch Basin - (RD-L-7)-Z5-L07-ST | 2026-08-03 A | 2026-08-04 → 2026-09-20 A (+47d) |  | 0% → 100% |  |
| RHD4CZ5L07ST8300 | Rings & C.Slab & Final Backfillfor Double Catch Basin - (RD-L-7)-Z5-L07-ST | 2026-08-06 → 2026-12-31 (+147d) | 2026-08-08 → 2027-01-02 (+147d) |  |  |  |
| RHD4CZ5L07ST8400 | Steel Cover for Double Catch Basin - (RD-L-7)-Z5-L07-ST | 2026-08-09 → 2027-01-03 (+147d) | 2026-08-10 → 2027-01-04 (+147d) |  |  |  |
| RHD4CZ5L07ST8500 | Finishing and Insulation works for Double Catch Basin - (RD-L-7)-Z5-L07-ST | 2026-08-11 → 2027-01-05 (+147d) | 2026-08-12 → 2027-01-06 (+147d) |  |  |  |
| 3406 | **RHD4-02-002-Z5-L07-Sewage Network - SW** | 2026-08-08 → 2026-08-10 (+2d) | 2026-12-17 → 2027-06-13 (+178d) |  |  |  |
| 3416 | **RHD4-02-002-L07-(SW)-MH Works - 1200 mm diameter** | 2026-08-08 → 2026-08-10 (+2d) | 2026-12-17 → 2027-06-13 (+178d) |  |  |  |
| RHD4CZ5L07SW3100 | Excavation and PC Blinding works for MH 1200 mm - (RD-L-7)-Z5-L07-SW | 2026-08-08 → 2026-08-10 A (+2d) | 2026-08-17 → 2026-08-15 A (-2d) |  | 0% → 100% | resources Skilled labor [98.01 h]; Unskilled Labor [98.01 h]; Equipment Opreator [156.82 h]; Excavator-Poclain [98.01 h]; Water Truck [9.8 h]; Dump Truck [49.01 h]; MH (1200mm Diameter) - SW - depth 0 - 1.5m [1.5 nr]; MH (1200mm Diameter) - SW - depth 1.51 - 2.5m [3.5 nr] → Skilled labor [98.01 h]; Unskilled Labor [98.01 h]; Equipment Opreator [156.8 h]; Excavator-Poclain [98.01 h]; Water Truck [9.8 h]; Dump Truck [49.01 h]; MH (1200mm Diameter) - SW - depth 0 - 1.5m [1.5 nr]; MH (1200mm Diameter) - SW - depth 1.51 - 2.5m [3.5 nr] |
| RHD4CZ5L07SW3200 | Installation of Base for MH 1200 mm - (RD-L-7)-Z5-L07-SW | 2026-08-18 → 2026-08-11 A (-7d) | 2026-08-29 → 2026-09-20 A (+22d) |  | 0% → 100% |  |
| RHD4CZ5L07SW3300 | MH Ring and C.Slab works and Backfilling works for MH 1200 mm - (RD-L-7)-Z5-L07-SW | 2026-08-30 → 2026-10-20 A (+51d) | 2026-09-09 → 2026-10-25 A (+46d) | 10d → 5d | 0% → 100% |  |
| RHD4CZ5L07SW3400 | Steel Cover for MH 1200 mm - (RD-L-7)-Z5-L07-SW | 2026-11-29 → 2027-05-25 (+177d) | 2026-12-06 → 2027-06-01 (+177d) |  |  |  |
| RHD4CZ5L07SW3500 | Finishing, Benching, Testing works for MH 1200 mm - (RD-L-7)-Z5-L07-SW | 2026-12-07 → 2027-06-02 (+177d) | 2026-12-17 → 2027-06-13 (+178d) |  |  |  |
| 3412 | **RHD4-02-002-L07-(SW)-UPVC Pipes - 200 mm diameter** | 2026-08-18 → 2026-08-11 (-7d) | 2026-09-27 → 2027-02-15 (+141d) |  |  |  |
| RHD4CZ5L07SW2100 | Excavation works for UPVC Pipe Line 200 mm - (RD-L-7)-Z5-L07-SW | 2026-08-18 → 2026-08-11 A (-7d) | 2026-08-22 → 2026-08-15 A (-7d) |  | 0% → 100% |  |
| RHD4CZ5L07SW2200 | Bedding works for UPVC Pipe Line 200 mm - (RD-L-7)-Z5-L07-SW | 2026-08-23 → 2026-08-13 A (-10d) | 2026-08-26 → 2026-08-17 A (-9d) |  | 0% → 100% |  |
| RHD4CZ5L07SW2500 | Backfilling and warning tape works for UPVC Pipe Line 200 mm - (RD-L-7)-Z5-L07-SW | 2026-09-21 → 2026-08-13 A (-39d) | 2026-09-27 → 2026-08-22 A (-36d) |  | 0% → 100% |  |
| RHD4CZ5L07SW2300 | Installing for UPVC Pipe Line 200 mm - (RD-L-7)-Z5-L07-SW | 2026-09-10 → 2026-08-15 A (-26d) | 2026-09-16 → 2026-08-19 A (-28d) |  | 0% → 100% |  |
| RHD4CZ5L07SW2400 | Primary Test for UPVC Pipe Line 200 mm - (RD-L-7)-Z5-L07-SW | 2026-09-17 → 2026-10-27 A (+40d) | 2026-09-20 → 2027-02-15 (+148d) |  | 0% → 80% |  |
| 3443 | **RHD4-02-002-Z5-L07-Potable Network - PT** | 2026-09-28 → 2026-08-04 (-55d) | 2026-12-12 → 2027-05-02 (+141d) |  |  |  |
| 3447 | **RHD4-02-002-L07-(PT)-HDPE Pipes - 400 mm diameter** | 2026-09-28 → 2027-02-16 (+141d) | 2026-10-08 → 2027-02-28 (+143d) |  |  |  |
| RHD4CZ5L07PT1103 | Excavation works for HDPE Pipline 400 mm - (RD-L-7)-Z5-L07-PT | 2026-09-28 → 2027-02-16 (+141d) | 2026-09-29 → 2027-02-17 (+141d) |  |  |  |
| RHD4CZ5L07PT1203 | Bedding works for HDPE Pipline 400 mm - (RD-L-7)-Z5-L07-PT | 2026-09-30 → 2027-02-18 (+141d) | 2026-10-01 → 2027-02-20 (+142d) |  |  |  |
| RHD4CZ5L07PT1303 | Installing for HDPE Pipline 400 mm - (RD-L-7)-Z5-L07-PT | 2026-10-03 → 2027-02-21 (+141d) | 2026-10-04 → 2027-02-23 (+142d) |  |  |  |
| RHD4CZ5L07PT1403 | Primary Test for HDPE Pipline 400 mm - (RD-L-7)-Z5-L07-PT | 2026-10-05 → 2027-02-24 (+142d) | 2026-10-06 → 2027-02-25 (+142d) |  |  |  |
| RHD4CZ5L07PT1503 | Backfilling and warning tape works for HDPE Pipline 400 mm - (RD-L-7)-Z5-L07-PT | 2026-10-07 → 2027-02-27 (+143d) | 2026-10-08 → 2027-02-28 (+143d) |  |  |  |
| 2687 | **RHD4-02-002-L07-(PT)-HDPE Pipes - 110 mm diameter** | 2026-09-28 → 2027-02-16 (+141d) | 2026-10-08 → 2027-02-28 (+143d) |  |  |  |
| RHD4CZ5L07PT1100 | Excavation works for HDPE Pipline 110 mm - (RD-L-7)-Z5-L07-PT | 2026-09-28 → 2027-02-16 (+141d) | 2026-09-29 → 2027-02-17 (+141d) |  |  |  |
| RHD4CZ5L07PT1200 | Bedding works for HDPE Pipline 110 mm - (RD-L-7)-Z5-L07-PT | 2026-09-30 → 2027-02-18 (+141d) | 2026-10-01 → 2027-02-20 (+142d) |  |  |  |
| RHD4CZ5L07PT1300 | Installing for HDPE Pipline 110 mm - (RD-L-7)-Z5-L07-PT | 2026-10-03 → 2027-02-21 (+141d) | 2026-10-04 → 2027-02-23 (+142d) |  |  |  |
| RHD4CZ5L07PT1400 | Primary Test for HDPE Pipline 110 mm - (RD-L-7)-Z5-L07-PT | 2026-10-05 → 2027-02-24 (+142d) | 2026-10-06 → 2027-02-25 (+142d) |  |  |  |
| RHD4CZ5L07PT1500 | Backfilling and warning tape works for HDPE Pipline 110 mm - (RD-L-7)-Z5-L07-PT | 2026-10-07 → 2027-02-27 (+143d) | 2026-10-08 → 2027-02-28 (+143d) |  |  |  |
| 3445 | **RHD4-02-002-L07-(PT)-HDPE Pipes - 160 mm diameter** | 2026-09-30 → 2026-08-04 (-57d) | 2026-11-12 → 2027-04-03 (+142d) |  |  |  |
| RHD4CZ5L07PT1101 | Excavation works for HDPE Pipline 160 mm - (RD-L-7)-Z5-L07-PT | 2026-09-30 → 2026-08-04 A (-57d) | 2026-10-08 → 2027-02-23 (+138d) |  | 0% → 4% |  |
| RHD4CZ5L07PT1201 | Bedding works for HDPE Pipline 160 mm - (RD-L-7)-Z5-L07-PT | 2026-10-10 → 2026-08-06 A (-65d) | 2026-10-13 → 2027-02-28 (+138d) |  | 0% → 4% |  |
| RHD4CZ5L07PT1301 | Installing for HDPE Pipline 160 mm - (RD-L-7)-Z5-L07-PT | 2026-10-14 → 2026-08-08 A (-67d) | 2026-10-21 → 2027-03-08 (+138d) |  | 0% → 5% |  |
| RHD4CZ5L07PT1401 | Primary Test for HDPE Pipline 160 mm - (RD-L-7)-Z5-L07-PT | 2026-11-03 → 2027-03-24 (+141d) | 2026-11-05 → 2027-03-27 (+142d) |  |  |  |
| RHD4CZ5L07PT1501 | Backfilling and warning tape works for HDPE Pipline 160 mm - (RD-L-7)-Z5-L07-PT | 2026-11-07 → 2027-03-28 (+141d) | 2026-11-12 → 2027-04-03 (+142d) |  |  |  |
| 3449 | **RHD4-02-002-L07-(PT)-Gate Valves (Direct Buried)** | 2026-10-20 → 2027-03-13 (+144d) | 2026-11-15 → 2027-04-05 (+141d) |  |  |  |
| RHD4CZ5L07PT3100 | Installation for Direct Buried Gate Valves - (RD-L-7)-Z5-L07-PT | 2026-10-20 → 2027-03-13 (+144d) | 2026-10-21 → 2027-03-14 (+144d) |  |  |  |

| ID | Task | Start | Finish | Complete | Other |
| --- | --- | --- | --- | --- | --- |
| RHD4CZ5L07PT3200 | Stem and Service box for Direct Buried Gate Valves - (RD-L-7)-Z5-L07-PT | 2026-11-14 → 2027-04-04 (+141d) | 2026-11-15 → 2027-04-05 (+141d) |  |  |
| 3450 | **RHD4-02-002-L07-(PT)-Butterfly Valve Chamber** | 2026-09-30 → 2027-02-18 (+141d) | 2026-10-08 → 2027-02-28 (+143d) |  |  |
| RHD4CZ5L07PT2100 | Excavation and Bedding for Butterfly Valve Chamber for Potable Water Network - (RD-L-7)-Z5-L07-PT | 2026-09-30 → 2027-02-18 (+141d) | 2026-10-01 → 2027-02-20 (+142d) |  |  |
| RHD4CZ5L07PT2200 | PC works for Butterfly Valve Chamber for Potable Water Network - (RD-L-7)-Z5-L07-PT | 2026-10-03 → 2027-02-21 (+141d) | 2026-10-04 → 2027-02-23 (+142d) |  |  |
| RHD4CZ5L07PT2300 | Installation for Butterfly Valve Chamber for Potable Water Network - (RD-L-7)-Z5-L07-PT | 2026-10-05 → 2027-02-24 (+142d) | 2026-10-06 → 2027-02-25 (+142d) |  |  |
| RHD4CZ5L07PT2400 | Backfilling works for Butterfly Valve Chamber for Potable Water Network - (RD-L-7)-Z5-L07-PT | 2026-10-07 → 2027-02-27 (+143d) | 2026-10-08 → 2027-02-28 (+143d) |  |  |
| 3451 | **RHD4-02-002-L07-(PT)-Butterfly Valves** | 2026-10-07 → 2027-02-27 (+143d) | 2026-10-11 → 2027-03-02 (+142d) |  |  |
| RHD4CZ5L07PT3101 | Installation for Butterfly Valves for Potable Water Network - (RD-L-7)-Z5-L07-PT | 2026-10-07 → 2027-02-27 (+143d) | 2026-10-08 → 2027-02-28 (+143d) |  |  |
| RHD4CZ5L07PT3201 | Stem and Service box for Butterfly Valves for Potable Water Network - (RD-L-7)-Z5-L07-PT | 2026-10-10 → 2027-03-01 (+142d) | 2026-10-11 → 2027-03-02 (+142d) |  |  |
| 3452 | **RHD4-02-002-L07-(PT)-Wash out Valve Chambers** | 2026-11-14 → 2027-04-04 (+141d) | 2026-11-24 → 2027-04-14 (+141d) |  |  |
| RHD4CZ5L07PT2101 | Excavation and Bedding for Wash out Valve Chambers for Potable Water Network - (RD-L-7)-Z5-L07-PT | 2026-11-14 → 2027-04-04 (+141d) | 2026-11-15 → 2027-04-05 (+141d) |  |  |
| RHD4CZ5L07PT2201 | PC works for Wash out Valve Chambers for Potable Water Network - (RD-L-7)-Z5-L07-PT | 2026-11-16 → 2027-04-06 (+141d) | 2026-11-17 → 2027-04-07 (+141d) |  |  |
| RHD4CZ5L07PT2301 | Installation for Wash out Valve Chambers for Potable Water Network - (RD-L-7)-Z5-L07-PT | 2026-11-18 → 2027-04-08 (+141d) | 2026-11-19 → 2027-04-10 (+142d) |  |  |
| RHD4CZ5L07PT2401 | Backfilling works for Wash out Valve Chambers for Potable Water Network - (RD-L-7)-Z5-L07-PT | 2026-11-21 → 2027-04-11 (+141d) | 2026-11-24 → 2027-04-14 (+141d) |  |  |
| 3453 | **RHD4-02-002-L07-(PT)-Wash out Valves** | 2026-11-21 → 2027-04-11 (+141d) | 2026-11-29 → 2027-04-19 (+141d) |  |  |
| RHD4CZ5L07PT3102 | Installation for Wash out Valves for Potable Water Network - (RD-L-7)-Z5-L07-PT | 2026-11-21 → 2027-04-11 (+141d) | 2026-11-24 → 2027-04-14 (+141d) |  |  |
| RHD4CZ5L07PT3202 | Stem and Service box for Wash out Valves for Potable Water Network - (RD-L-7)-Z5-L07-PT | 2026-11-25 → 2027-04-15 (+141d) | 2026-11-29 → 2027-04-19 (+141d) |  |  |
| 3454 | **RHD4-02-002-L07-(PT)-Air Valve Chambers** | 2026-11-14 → 2027-04-04 (+141d) | 2026-11-26 → 2027-04-17 (+142d) |  |  |
| RHD4CZ5L07PT2102 | Excavation and Bedding for Air Valve Chambers for Potable Water Network - (RD-L-7)-Z5-L07-PT | 2026-11-14 → 2027-04-04 (+141d) | 2026-11-15 → 2027-04-05 (+141d) |  |  |
| RHD4CZ5L07PT2202 | PC works for Air Valve Chambers for Potable Water Network - (RD-L-7)-Z5-L07-PT | 2026-11-16 → 2027-04-06 (+141d) | 2026-11-17 → 2027-04-07 (+141d) |  |  |
| RHD4CZ5L07PT2302 | Installation for Air Valve Chambers for Potable Water Network - (RD-L-7)-Z5-L07-PT | 2026-11-18 → 2027-04-08 (+141d) | 2026-11-22 → 2027-04-12 (+141d) |  |  |
| RHD4CZ5L07PT2402 | Backfilling works for Air Valve Chambers for Potable Water Network - (RD-L-7)-Z5-L07-PT | 2026-11-23 → 2027-04-13 (+141d) | 2026-11-26 → 2027-04-17 (+142d) |  |  |
| 3455 | **RHD4-02-002-L07-(PT)-Air Valves** | 2026-10-22 → 2027-03-13 (+142d) | 2026-11-29 → 2027-04-19 (+141d) |  |  |
| RHD4CZ5L07PT3103 | Installation for Air Valves for Potable Water Network - (RD-L-7)-Z5-L07-PT | 2026-10-22 → 2027-03-13 (+142d) | 2026-10-24 → 2027-03-14 (+141d) |  |  |
| RHD4CZ5L07PT3203 | Stem and Service box for Air Valves for Potable Water Network - (RD-L-7)-Z5-L07-PT | 2026-11-28 → 2027-04-18 (+141d) | 2026-11-29 → 2027-04-19 (+141d) |  |  |
| 3456 | **RHD4-02-002-L07-(PT)-Fire Hydrant** | 2026-11-14 → 2027-04-04 (+141d) | 2026-12-12 → 2027-05-02 (+141d) |  |  |
| RHD4CZ5L07PT4100 | Excavation and Bedding and Pipe Installation for Fire Hydrant - (RD-L-7)-Z5-L07-PT | 2026-11-14 → 2027-04-04 (+141d) | 2026-11-21 → 2027-04-11 (+141d) |  |  |
| RHD4CZ5L07PT4200 | Valve Installation for Fire Hydrant - (RD-L-7)-Z5-L07-PT | 2026-11-22 → 2027-04-12 (+141d) | 2026-11-26 → 2027-04-17 (+142d) |  |  |
| RHD4CZ5L07PT4300 | Stem for Fire Hydrant - (RD-L-7)-Z5-L07-PT | 2026-11-28 → 2027-04-18 (+141d) | 2026-12-02 → 2027-04-22 (+141d) |  |  |
| RHD4CZ5L07PT4400 | Fire Installation for Fire Hydrant - (RD-L-7)-Z5-L07-PT | 2026-12-03 → 2027-04-24 (+142d) | 2026-12-08 → 2027-04-28 (+141d) |  |  |
| RHD4CZ5L07PT4500 | Protection Barriers for Fire Hydrant - (RD-L-7)-Z5-L07-PT | 2026-12-09 → 2027-04-29 (+141d) | 2026-12-12 → 2027-05-02 (+141d) |  |  |
| 3457 | **RHD4-02-002-L07-(PT)-Concrete Encasement** | 2026-10-14 → 2027-03-01 (+138d) | 2026-11-02 → 2027-03-23 (+141d) |  |  |
| RHD4CZ5L07PT5100 | Pipe Encasement for Potable Pipelines - (RD-L-7)-Z5-L07-PT | 2026-10-14 → 2027-03-01 (+138d) | 2026-11-02 → 2027-03-23 (+141d) |  |  |
| 3458 | **RHD4-02-002-Z5-L07-Irrigation Network - IRR** | 2026-10-10 → 2026-08-04 (-67d) | 2026-11-15 → 2027-04-10 (+146d) |  |  |
| 3459 | **RHD4-02-002-L07-(IRR)-HDPE Pipes - 160 mm diameter** | 2026-10-10 → 2026-08-04 (-67d) | 2026-11-03 → 2027-03-29 (+146d) |  |  |
| RHD4CZ5L07IRR1100 | Excavation works for HDPE Pipline 160 mm - (RD-L-7)-Z5-L07-IRR | 2026-10-10 → 2026-08-04 A (-67d) | 2026-10-15 → 2027-03-07 (+143d) | 0% → 6% | resources Skilled labor [57.61 h]; Unskilled Labor [57.61 h]; Equipment Opreator [69.15 h]; Excavator-Poclain [57.61 h]; Dump Truck [11.54 h]; HDPE (160mm Diameter) - TSE - Depth: less than 1.5m [78.68 m]; HDPE (160mm Diameter) - TSE - Depth: more than 1.51m [0.97 m] → Skilled labor [57.6 h]; Unskilled Labor [57.6 h]; Equipment Opreator [69.15 h]; Excavator-Poclain [57.6 h]; Dump Truck [11.54 h]; HDPE (160mm Diameter) - TSE - Depth: less than 1.5m [78.68 m]; HDPE (160mm Diameter) - TSE - Depth: more than 1.51m [0.97 m] |
| RHD4CZ5L07IRR1200 | Bedding works for HDPE Pipline 160 mm - (RD-L-7)-Z5-L07-IRR | 2026-10-17 → 2026-08-06 A (-72d) | 2026-10-20 → 2027-03-15 (+146d) | 0% → 6% |  |
| RHD4CZ5L07IRR1300 | Installing for HDPE Pipline 160 mm - (RD-L-7)-Z5-L07-IRR | 2026-10-21 → 2026-08-08 A (-74d) | 2026-10-27 → 2027-03-22 (+146d) | 0% → 6% | resources Unskilled Labor [115.22 h]; Plumber [57.61 h]; Equipment Opreator [57.61 h]; Boom Truck [57.61 h]; HDPE (160mm Diameter) - TSE - Depth: less than 1.5m [354.07 m]; HDPE (160mm Diameter) - TSE - Depth: more than 1.51m [2.6 m] → Unskilled Labor [115.2 h]; Plumber [57.6 h]; Equipment Opreator [57.6 h]; Boom Truck [57.6 h]; HDPE (160mm Diameter) - TSE - Depth: less than 1.5m [354.07 m]; HDPE (160mm Diameter) - TSE - Depth: more than 1.51m [2.6 m] |
| RHD4CZ5L07IRR1400 | Primary Test for HDPE Pipline 160 mm - (RD-L-7)-Z5-L07-IRR | 2026-10-28 → 2027-03-23 (+146d) | 2026-10-29 → 2027-03-24 (+146d) |  |  |
| RHD4CZ5L07IRR1500 | Backfilling and warning tape works for HDPE Pipline 160 mm - (RD-L-7)-Z5-L07-IRR | 2026-10-31 → 2027-03-25 (+145d) | 2026-11-03 → 2027-03-29 (+146d) |  |  |
| 1770 | **RHD4-02-002-L07-(IRR)-Air Valves** | 2026-10-24 → 2027-03-18 (+145d) | 2026-10-27 → 2027-03-22 (+146d) |  |  |
| RHD4CZ5L07IRR3103 | Installation for Air Valves for Irrigation Network - (RD-L-7)-Z5-L07-IRR | 2026-10-24 → 2027-03-18 (+145d) | 2026-10-25 → 2027-03-20 (+146d) |  |  |
| RHD4CZ5L07IRR3203 | Stem and Service box for Air Valves for Irrigation Network - (RD-L-7)-Z5-L07-IRR | 2026-10-26 → 2027-03-21 (+146d) | 2026-10-27 → 2027-03-22 (+146d) |  |  |
| 1769 | **RHD4-02-002-L07-(IRR)-Air Valve Chamber** | 2026-10-17 → 2027-03-08 (+142d) | 2026-10-25 → 2027-03-20 (+146d) |  |  |
| RHD4CZ5L07IRR2102 | Excavation and Bedding for Valve Chamber for Irrigation Network - (RD-L-7)-Z5-L07-IRR | 2026-10-17 → 2027-03-08 (+142d) | 2026-10-18 → 2027-03-13 (+146d) |  |  |
| RHD4CZ5L07IRR2202 | PC works for Valve Chamber for Irrigation Network - (RD-L-7)-Z5-L07-IRR | 2026-10-19 → 2027-03-14 (+146d) | 2026-10-20 → 2027-03-15 (+146d) |  |  |
| RHD4CZ5L07IRR2302 | Installation for Valve Chamber for Irrigation Network - (RD-L-7)-Z5-L07-IRR | 2026-10-21 → 2027-03-16 (+146d) | 2026-10-22 → 2027-03-17 (+146d) |  |  |
| RHD4CZ5L07IRR2402 | Backfilling works for Valve Chamber for Irrigation Network - (RD-L-7)-Z5-L07-IRR | 2026-10-24 → 2027-03-18 (+145d) | 2026-10-25 → 2027-03-20 (+146d) |  |  |
| 3467 | **RHD4-02-002-L07-(IRR)-Gate Valves (Direct Buried)** | 2026-10-25 → 2027-03-20 (+146d) | 2026-11-07 → 2027-04-01 (+145d) |  |  |
| RHD4CZ5L07IRR3100 | Installation for Direct Buried Gate Valves - (RD-L-7)-Z5-L07-IRR | 2026-10-25 → 2027-03-20 (+146d) | 2026-10-27 → 2027-03-22 (+146d) |  | resources Unskilled Labor [27.23 h]; Plumber [27.23 h]; Gate valves dia 100 mm - TSE [4.5 nr] → Unskilled Labor [27.2 h]; Plumber [27.2 h]; Gate valves dia 100 mm - TSE [4.5 nr] |
| RHD4CZ5L07IRR3200 | Stem and Service box for Direct Buried Gate Valves - (RD-L-7)-Z5-L07-IRR | 2026-11-04 → 2027-03-30 (+146d) | 2026-11-07 → 2027-04-01 (+145d) |  | resources Unskilled Labor [27.23 h]; Plumber [27.23 h]; Gate valves dia 100 mm - TSE [0.5 nr] → Unskilled Labor [27.2 h]; Plumber [27.2 h]; Gate valves dia 100 mm - TSE [0.5 nr] |
| 3470 | **RHD4-02-002-L07-(IRR)-Wash out Chamber** | 2026-11-04 → 2027-03-30 (+146d) | 2026-11-12 → 2027-04-07 (+146d) |  |  |
| RHD4CZ5L07IRR2101 | Excavation and Bedding for Wash out Chamber for Irrigation Network - (RD-L-7)-Z5-L07-IRR | 2026-11-04 → 2027-03-30 (+146d) | 2026-11-05 → 2027-03-31 (+146d) |  |  |
| RHD4CZ5L07IRR2201 | PC works for Wash out Chamber for Irrigation Network - (RD-L-7)-Z5-L07-IRR | 2026-11-07 → 2027-04-01 (+145d) | 2026-11-08 → 2027-04-03 (+146d) |  |  |
| RHD4CZ5L07IRR2301 | Installation for Wash out Chamber for Irrigation Network - (RD-L-7)-Z5-L07-IRR | 2026-11-09 → 2027-04-04 (+146d) | 2026-11-10 → 2027-04-05 (+146d) |  |  |
| RHD4CZ5L07IRR2401 | Backfilling works for Wash out Chamber for Irrigation Network - (RD-L-7)-Z5-L07-IRR | 2026-11-11 → 2027-04-06 (+146d) | 2026-11-12 → 2027-04-07 (+146d) |  |  |
| 3471 | **RHD4-02-002-L07-(IRR)-Wash out Valves** | 2026-11-11 → 2027-04-06 (+146d) | 2026-11-15 → 2027-04-10 (+146d) |  |  |
| RHD4CZ5L07IRR3102 | Installation for Wash out Valve for Irrigation Network - (RD-L-7)-Z5-L07-IRR | 2026-11-11 → 2027-04-06 (+146d) | 2026-11-12 → 2027-04-07 (+146d) |  |  |
| RHD4CZ5L07IRR3202 | Stem and Service box for Wash out Valve for Irrigation Network - (RD-L-7)-Z5-L07-IRR | 2026-11-14 → 2027-04-08 (+145d) | 2026-11-15 → 2027-04-10 (+146d) |  |  |
| 3492 | **RHD4-02-002-Z5-L07-Medium Voltage Network - MV** | 2027-02-03 → 2027-07-29 (+176d) | 2027-04-05 → 2027-09-25 (+173d) |  |  |
| 3493 | **RHD4-02-002-L07-(MV)-Medium Voltage cable trench** | 2027-02-03 → 2027-07-29 (+176d) | 2027-03-02 → 2027-08-24 (+175d) |  |  |
| RHD4CZ5L07MV1100 | Excavation for Medium Voltage Trench - (RD-L-7)-Z5-L07-MV | 2027-02-03 → 2027-07-29 (+176d) | 2027-02-15 → 2027-08-10 (+176d) |  |  |
| RHD4CZ5L07MV1200 | Trench Backfilling for Medium Voltage Network - (RD-L-7)-Z5-L07-MV | 2027-02-16 → 2027-08-11 (+176d) | 2027-03-02 → 2027-08-24 (+175d) |  |  |
| 1982 | **RHD4-02-002-L07-(MV)-Medium Voltage cables 3Cx 50 mm²** | 2027-03-16 → 2027-09-04 (+172d) | 2027-03-17 → 2027-09-05 (+172d) |  |  |
| RHD4CZ5L07MV3401 | Termination of Medium Voltage Cables 3Cx 50 mm² - (RD-L-7)-Z5-L07-MV | 2027-03-16 → 2027-09-04 (+172d) | 2027-03-17 → 2027-09-05 (+172d) |  |  |
| 3494 | **RHD4-02-002-L07-(MV)-Medium Voltage duct banks** | 2027-02-16 → 2027-08-11 (+176d) | 2027-04-05 → 2027-09-25 (+173d) |  |  |
| RHD4CZ5L07MV2100 | Excavation of Duct Banks for Medium Voltage Network - (RD-L-7)-Z5-L07-MV | 2027-02-16 → 2027-08-11 (+176d) | 2027-02-27 → 2027-08-21 (+175d) |  |  |
| RHD4CZ5L07MV2200 | Installation of Duct Banks for Medium Voltage Network - (RD-L-7)-Z5-L07-MV | 2027-02-28 → 2027-08-22 (+175d) | 2027-03-17 → 2027-09-05 (+172d) |  |  |
| RHD4CZ5L07MV2300 | Pouring of Duct Banks for Medium Voltage Network - (RD-L-7)-Z5-L07-MV | 2027-03-18 → 2027-09-06 (+172d) | 2027-03-28 → 2027-09-15 (+171d) |  |  |
| RHD4CZ5L07MV2400 | Backfilling of Duct Banks for Medium Voltage Network - (RD-L-7)-Z5-L07-MV | 2027-03-29 → 2027-09-16 (+171d) | 2027-04-05 → 2027-09-25 (+173d) |  |  |

| ID | Task | Start | Finish | Other |
| --- | --- | --- | --- | --- |
| 3495 | **RHD4-02-002-L07-(MV)-Medium Voltage cables 3Cx 500 mm²** | 2027-02-16 → 2027-08-11 (+176d) | 2027-03-15 → 2027-09-02 (+171d) |  |
| RHD4CZ5L07MV3100 | Installation of Medium Voltage Cables 3Cx 500 mm² - (RD-L-7)-Z5-L07-MV | 2027-02-16 → 2027-08-11 (+176d) | 2027-02-27 → 2027-08-21 (+175d) | resources Skilled labor [278.79 h]; Unskilled Labor [1115.17 h]; Electrician [557.59 h]; Equipment Opreator [836.38 h]; Boom Truck [278.79 h]; Cable Laying Machine [557.59 h]; Cable 13.8 kV 3Cx 500 mm² Al/XLPE,/LLDPE / Unarmored [3456.09 m] → Skilled labor [278.79 h]; Unskilled Labor [1115.2 h]; Electrician [557.6 h]; Equipment Opreator [836.38 h]; Boom Truck [278.79 h]; Cable Laying Machine [557.6 h]; Cable 13.8 kV 3Cx 500 mm² Al/XLPE,/LLDPE / Unarmored [3456.09 m] |
| RHD4CZ5L07MV3200 | Joints Installation of Medium Voltage Cables 3Cx 500 mm² - (RD-L-7)-Z5-L07-MV | 2027-02-28 → 2027-08-22 (+175d) | 2027-03-02 → 2027-08-24 (+175d) | resources Skilled labor [27.23 h]; Unskilled Labor [108.9 h]; Electrician [54.45 h]; Equipment Opreator [27.23 h]; Boom Truck [27.23 h]; Straight joints cables for 13.8 kv 3Cx 500 mm², Al /XLPE/LLDPE [5 Unit] → Skilled labor [27.2 h]; Unskilled Labor [108.9 h]; Electrician [54.45 h]; Equipment Opreator [27.2 h]; Boom Truck [27.2 h]; Straight joints cables for 13.8 kv 3Cx 500 mm², Al /XLPE/LLDPE [5 Unit] |
| RHD4CZ5L07MV3300 | Testing of Medium Voltage Cables 3Cx 500 mm² - (RD-L-7)-Z5-L07-MV | 2027-03-03 → 2027-08-25 (+175d) | 2027-03-15 → 2027-09-02 (+171d) |  |
| 3499 | **RHD4-02-002-Z5-L07-Low Voltage Network - LV** | 2026-10-10 → 2027-03-01 (+142d) | 2027-04-05 → 2027-09-25 (+173d) |  |
| 3500 | **RHD4-02-002-L07-(LV)-Low Voltage duct banks** | 2026-10-10 → 2027-03-01 (+142d) | 2026-10-18 → 2027-03-13 (+146d) |  |
| RHD4CZ5L07LV2100 | Excavation of Duct Banks for Low Voltage Network - (RD-L-7)-Z5-L07-LV | 2026-10-10 → 2027-03-01 (+142d) | 2026-10-11 → 2027-03-02 (+142d) |  |
| RHD4CZ5L07LV2200 | Installation of Duct Banks for Low Voltage Network - (RD-L-7)-Z5-L07-LV | 2026-10-12 → 2027-03-03 (+142d) | 2026-10-13 → 2027-03-04 (+142d) |  |
| RHD4CZ5L07LV2300 | Pouring of Duct Banks for Low Voltage Network - (RD-L-7)-Z5-L07-LV | 2026-10-14 → 2027-03-06 (+143d) | 2026-10-15 → 2027-03-07 (+143d) |  |
| RHD4CZ5L07LV2400 | Backfilling of Duct Banks for Low Voltage Network - (RD-L-7)-Z5-L07-LV | 2026-10-17 → 2027-03-08 (+142d) | 2026-10-18 → 2027-03-13 (+146d) | resources Skilled labor [8.82 h]; Unskilled Labor [8.82 h]; Equipment Opreator [3.48 h]; Excavator-Poclain [3.48 h]; Duct bank for LV cables UPVC (2xø110mm) [2.43 m] → Skilled labor [8.8 h]; Unskilled Labor [8.8 h]; Equipment Opreator [3.48 h]; Excavator-Poclain [3.48 h]; Duct bank for LV cables UPVC (2xø110mm) [2.43 m] |
| 3502 | **RHD4-02-002-L07-(LV)-Low Voltage cables** | 2027-02-16 → 2027-08-11 (+176d) | 2027-03-24 → 2027-09-12 (+172d) |  |
| RHD4CZ5L07LV3100 | Excavation for Low Voltage Cables for Low Voltage Network - (RD-L-7)-Z5-L07-LV | 2027-02-16 → 2027-08-11 (+176d) | 2027-02-27 → 2027-08-21 (+175d) |  |
| RHD4CZ5L07LV3200 | Cable Laying of Low Voltage Cables for Low Voltage Network - (RD-L-7)-Z5-L07-LV | 2027-02-28 → 2027-08-22 (+175d) | 2027-03-07 → 2027-08-29 (+175d) |  |
| RHD4CZ5L07LV3300 | Warning tape and Backfill for Low Voltage Cables for Low Voltage Network - (RD-L-7)-Z5-L07-LV | 2027-03-08 → 2027-08-30 (+175d) | 2027-03-18 → 2027-09-06 (+172d) |  |
| RHD4CZ5L07LV3400 | Testing of Low Voltage Cables for Low Voltage Network - (RD-L-7)-Z5-L07-LV | 2027-03-20 → 2027-09-07 (+171d) | 2027-03-24 → 2027-09-12 (+172d) |  |
| 3503 | **RHD4-02-002-L07-(LV)-Low Voltage Distribution Pillars** | 2027-03-25 → 2027-09-13 (+172d) | 2027-03-31 → 2027-09-19 (+172d) |  |
| RHD4CZ5L07LV4100 | Leveling for Distribution Pillars for Low Voltage Network - (RD-L-7)-Z5-L07-LV | 2027-03-25 → 2027-09-13 (+172d) | 2027-03-27 → 2027-09-14 (+171d) |  |
| RHD4CZ5L07LV4200 | Lean Concrete for Distribution Pillars for Low Voltage Network - (RD-L-7)-Z5-L07-LV | 2027-03-28 → 2027-09-15 (+171d) | 2027-03-29 → 2027-09-16 (+171d) |  |
| RHD4CZ5L07LV4300 | Installation of Distribution Pillars for Low Voltage Network - (RD-L-7)-Z5-L07-LV | 2027-03-30 → 2027-09-18 (+172d) | 2027-03-31 → 2027-09-19 (+172d) |  |
| 4257 | **RHD4-02-002-L07-(LV)-Low Voltage Drawpit** | 2027-04-01 → 2027-09-20 (+172d) | 2027-04-05 → 2027-09-25 (+173d) |  |
| RHD4CZ5L07LV5100 | Excavation of Drawpit size 900x900x1000mm for Low Voltage Network - (RD-L-7)-Z5-L07-LV | 2027-04-01 → 2027-09-20 (+172d) | 2027-04-03 → 2027-09-21 (+171d) | resources Skilled labor [1.85 h]; Unskilled Labor [1.85 h]; Equipment Opreator [1.42 h]; Excavator-Poclain [0.76 h]; Dump Truck [0.76 h]; Drawpit with medium duty steel cover, size900x900x1000mm, [0.3 Unit] → Skilled labor [1.85 h]; Unskilled Labor [1.85 h]; Equipment Opreator [1.42 h]; Excavator-Poclain [0.8 h]; Dump Truck [0.8 h]; Drawpit with medium duty steel cover, size900x900x1000mm, [0.3 Unit] |
| RHD4CZ5L07LV5200 | Installation of Drawpit size 900x900x1000mm for Low Voltage Network - (RD-L-7)-Z5-L07-LV | 2027-04-04 → 2027-09-22 (+171d) | 2027-04-05 → 2027-09-25 (+173d) | resources Skilled labor [1.85 h]; Unskilled Labor [1.85 h]; Equipment Opreator [0.76 h]; Boom Truck [0.76 h]; Drawpit with medium duty steel cover, size900x900x1000mm, [1.7 Unit] → Skilled labor [1.85 h]; Unskilled Labor [1.85 h]; Equipment Opreator [0.8 h]; Boom Truck [0.8 h]; Drawpit with medium duty steel cover, size900x900x1000mm, [1.7 Unit] |
| 3505 | **RHD4-02-002-Z5-L07-Street Lighting Network - SL** | 2026-10-12 → 2027-03-03 (+142d) | 2027-07-15 → 2027-12-30 (+168d) |  |
| 3506 | **RHD4-02-002-L07-(SL)-Street Lighting duct banks** | 2026-10-12 → 2027-03-03 (+142d) | 2026-10-31 → 2027-03-25 (+145d) |  |
| RHD4CZ5L07SL2100 | Excavation of Duct Banks for Street Lighting Network - (RD-L-7)-Z5-L07-SL | 2026-10-12 → 2027-03-03 (+142d) | 2026-10-15 → 2027-03-07 (+143d) |  |
| RHD4CZ5L07SL2200 | Installation of Duct Banks for Street Lighting Network - (RD-L-7)-Z5-L07-SL | 2026-10-17 → 2027-03-08 (+142d) | 2026-10-22 → 2027-03-17 (+146d) |  |
| RHD4CZ5L07SL2300 | Pouring of Duct Banks for Street Lighting Network - (RD-L-7)-Z5-L07-SL | 2026-10-24 → 2027-03-18 (+145d) | 2026-10-27 → 2027-03-22 (+146d) |  |
| RHD4CZ5L07SL2400 | Backfilling of Duct Banks for Street Lighting Network - (RD-L-7)-Z5-L07-SL | 2026-10-28 → 2027-03-23 (+146d) | 2026-10-31 → 2027-03-25 (+145d) |  |
| 3507 | **RHD4-02-002-L07-(SL)-Street Lighting Drawpit** | 2027-04-06 → 2027-09-26 (+173d) | 2027-04-10 → 2027-09-29 (+172d) |  |
| RHD4CZ5L07SL5100 | Excavation of Drawpit size 600x600x900mm for Street Lighting Network - (RD-L-7)-Z5-L07-SL | 2027-04-06 → 2027-09-26 (+173d) | 2027-04-07 → 2027-09-27 (+173d) |  |
| RHD4CZ5L07SL5200 | Installation of Drawpit size 600x600x900mm for Street Lighting Network - (RD-L-7)-Z5-L07-SL | 2027-04-08 → 2027-09-28 (+173d) | 2027-04-10 → 2027-09-29 (+172d) |  |
| 3508 | **RHD4-02-002-L07-(SL)-Street Lighting cables** | 2027-04-11 → 2027-09-30 (+172d) | 2027-05-29 → 2027-11-13 (+168d) |  |
| RHD4CZ5L07SL3100 | Excavation for Street Lighting Cables for Street Lighting Network - (RD-L-7)-Z5-L07-SL | 2027-04-11 → 2027-09-30 (+172d) | 2027-04-24 → 2027-10-13 (+172d) |  |
| RHD4CZ5L07SL3200 | Cable Laying of Street Lighting Cables for Street Lighting Network - (RD-L-7)-Z5-L07-SL | 2027-04-25 → 2027-10-14 (+172d) | 2027-05-05 → 2027-10-25 (+173d) |  |
| RHD4CZ5L07SL3300 | Warning tape and Backfill for Street Lighting Cables for Street Lighting Network - (RD-L-7)-Z5-L07-SL | 2027-05-06 → 2027-10-26 (+173d) | 2027-05-22 → 2027-11-06 (+168d) |  |
| RHD4CZ5L07SL3400 | Testing of Street Lighting Cables for Street Lighting Network - (RD-L-7)-Z5-L07-SL | 2027-05-23 → 2027-11-07 (+168d) | 2027-05-29 → 2027-11-13 (+168d) |  |
| 3509 | **RHD4-02-002-L07-(SL)-Street Lighting Poles** | 2027-05-30 → 2027-11-14 (+168d) | 2027-07-08 → 2027-12-23 (+168d) |  |
| RHD4CZ5L07SL1100 | Excavation for RC Base for Lighting Poles for Street Lighting Network - (RD-L-7)-Z5-L07-SL | 2027-05-30 → 2027-11-14 (+168d) | 2027-06-05 → 2027-11-20 (+168d) |  |
| RHD4CZ5L07SL1200 | Installation for RC Base for Lighting Poles for Street Lighting Network - (RD-L-7)-Z5-L07-SL | 2027-06-06 → 2027-11-21 (+168d) | 2027-06-12 → 2027-11-27 (+168d) |  |
| RHD4CZ5L07SL1300 | Backfill for RC Base for Lighting Poles for Street Lighting Network - (RD-L-7)-Z5-L07-SL | 2027-06-13 → 2027-11-28 (+168d) | 2027-06-19 → 2027-12-04 (+168d) |  |
| RHD4CZ5L07SL1400 | Installation for Lighting Poles for Street Lighting Network - (RD-L-7)-Z5-L07-SL | 2027-06-20 → 2027-12-05 (+168d) | 2027-06-29 → 2027-12-14 (+168d) |  |
| RHD4CZ5L07SL1500 | Luminaire Installation for Lighting Poles for Street Lighting Network - (RD-L-7)-Z5-L07-SL | 2027-07-03 → 2027-12-18 (+168d) | 2027-07-08 → 2027-12-23 (+168d) |  |
| 3511 | **RHD4-02-002-L07-(SL)-Street Lighting Earthing System** | 2027-06-30 → 2027-12-15 (+168d) | 2027-07-01 → 2027-12-16 (+168d) |  |
| RHD4CZ5L07SL6100 | Installation of Earthing for Lighting Poles and Fedder Pillers for Street Lighting Network - (RD-L-7)-Z5-L07-SL | 2027-06-30 → 2027-12-15 (+168d) | 2027-07-01 → 2027-12-16 (+168d) | resources Skilled labor [0.76 h]; Unskilled Labor [0.76 h]; Equipment Opreator [1.42 h]; Excavator-Poclain [0.76 h]; Dump Truck [0.76 h]; Including lighting poles circuits - ER [1 Unit] → Skilled labor [0.8 h]; Unskilled Labor [0.8 h]; Equipment Opreator [1.42 h]; Excavator-Poclain [0.8 h]; Dump Truck [0.8 h]; Including lighting poles circuits - ER [1 Unit] |
| 5023 | **RHD4-02-002-L07-(SL)-Street Lighting Feeder Pillars** | 2027-07-10 → 2027-12-25 (+168d) | 2027-07-15 → 2027-12-30 (+168d) |  |
| RHD4CZ5L07SL4100 | Leveling for Distribution Pillars for Street Lighting Network - (RD-L-7)-Z5-L07-SL | 2027-07-10 → 2027-12-25 (+168d) | 2027-07-11 → 2027-12-26 (+168d) |  |
| RHD4CZ5L07SL4200 | Lean Concrete for Distribution Pillars for Street Lighting Network - (RD-L-7)-Z5-L07-SL | 2027-07-12 → 2027-12-27 (+168d) | 2027-07-13 → 2027-12-28 (+168d) |  |
| RHD4CZ5L07SL4300 | Installation of Distribution Pillars for Street Lighting Network - (RD-L-7)-Z5-L07-SL | 2027-07-14 → 2027-12-29 (+168d) | 2027-07-15 → 2027-12-30 (+168d) |  |
| 3517 | **RHD4-02-002-Z5-L07-Telecommunications Network - TC** | 2027-07-17 → 2028-01-01 (+168d) | 2027-08-25 → 2028-03-21 (+209d) |  |
| 3518 | **RHD4-02-002-L07-(TC)-Telecommunications Ducts** | 2027-07-17 → 2028-01-01 (+168d) | 2027-08-25 → 2028-03-21 (+209d) |  |
| RHD4CZ5L07TC2100 | Excavation of HDPE Ducts for Telecom Network - (RD-L-7)-Z5-L07-TC | 2027-07-17 → 2028-01-01 (+168d) | 2027-07-26 → 2028-01-10 (+168d) |  |
| RHD4CZ5L07TC2200 | Installation of HDPE Ducts for Telecom Network - (RD-L-7)-Z5-L07-TC | 2027-07-27 → 2028-01-11 (+168d) | 2027-08-10 → 2028-01-25 (+168d) |  |
| RHD4CZ5L07TC2400 | Backfilling of HDPE Ducts for Telecom Network - (RD-L-7)-Z5-L07-TC | 2027-08-16 → 2028-03-12 (+209d) | 2027-08-25 → 2028-03-21 (+209d) |  |
| 3519 | **RHD4-02-002-L07-(TC)-Telecommunications Manholes** | 2027-07-27 → 2028-01-27 (+184d) | 2027-08-15 → 2028-03-11 (+209d) |  |
| RHD4CZ5L07TC5100 | Excavation for Manholes for Telecom Network - (RD-L-7)-Z5-L07-TC | 2027-07-27 → 2028-01-27 (+184d) | 2027-08-02 → 2028-02-02 (+184d) | resources Skilled labor [15.03 h]; Unskilled Labor [15.03 h]; Equipment Opreator [11.98 h]; Excavator-Poclain [5.99 h]; Dump Truck [5.99 h]; Manhole Type 1 - TC [1.05 nr]; Manhole Type 2 - TC [0.3 nr] → Skilled labor [15.03 h]; Unskilled Labor [15.03 h]; Equipment Opreator [12 h]; Excavator-Poclain [5.99 h]; Dump Truck [5.99 h]; Manhole Type 1 - TC [1.05 nr]; Manhole Type 2 - TC [0.3 nr] |
| RHD4CZ5L07TC5200 | Installation of Manholes for Telecom Network - (RD-L-7)-Z5-L07-TC | 2027-08-08 → 2028-03-04 (+209d) | 2027-08-15 → 2028-03-11 (+209d) |  |
| 3521 | **RHD4-02-002-Z5-L07-Information and Communication Technologies - ICT** | 2026-07-14 → 2026-12-31 (+170d) | 2027-10-14 → 2028-05-13 (+212d) |  |
| 3522 | **RHD4-02-002-L07-(ICT)-Information and Communication Technologies Ducts** | 2027-08-26 → 2028-03-22 (+209d) | 2027-10-14 → 2028-05-13 (+212d) |  |
| RHD4CZ5L07ICT2100 | Excavation of HDPE Ducts for ICT Network - (RD-L-7)-Z5-L07-ICT | 2027-08-26 → 2028-03-22 (+209d) | 2027-09-08 → 2028-04-04 (+209d) |  |
| RHD4CZ5L07ICT2200 | Installation of HDPE Ducts for ICT Network - (RD-L-7)-Z5-L07-ICT | 2027-09-09 → 2028-04-05 (+209d) | 2027-09-30 → 2028-04-25 (+208d) |  |
| RHD4CZ5L07ICT2400 | Backfilling of HDPE Ducts for ICT Network - (RD-L-7)-Z5-L07-ICT | 2027-10-02 → 2028-04-26 (+207d) | 2027-10-14 → 2028-05-13 (+212d) |  |
| 3523 | **RHD4-02-002-L07-(ICT)-Information and Communication Technologies Manholes** | 2027-09-09 → 2028-04-05 (+209d) | 2027-09-22 → 2028-04-18 (+209d) |  |
| RHD4CZ5L07ICT5100 | Excavation for Manholes for ICT Network - (RD-L-7)-Z5-L07-ICT | 2027-09-09 → 2028-04-05 (+209d) | 2027-09-15 → 2028-04-11 (+209d) |  |
| RHD4CZ5L07ICT5200 | Installation of Manholes for ICT Network - (RD-L-7)-Z5-L07-ICT | 2027-09-16 → 2028-04-12 (+209d) | 2027-09-22 → 2028-04-18 (+209d) |  |
| 3524 | **RHD4-02-002-L07-(ICT)-Information and Communication Technologies Road Crossings** | 2026-07-14 → 2026-12-31 (+170d) | 2026-08-29 → 2027-03-04 (+187d) |  |
| RHD4CZ5L07ICT3100 | Excavation for Road Crossings for ICT Network - (RD-L-7)-Z5-L07-ICT | 2026-07-14 → 2026-12-31 (+170d) | 2026-07-16 → 2027-01-03 (+171d) | resources Skilled labor [27.99 h]; Unskilled Labor [27.99 h]; Equipment Opreator [55.98 h]; Excavator-Poclain [27.99 h]; Dump Truck [27.99 h]; Road crossing ducts, (2*50mm) HDPE -ICT [5.14 m] → Skilled labor [28 h]; Unskilled Labor [28 h]; Equipment Opreator [56 h]; Excavator-Poclain [28 h]; Dump Truck [28 h]; Road crossing ducts, (2*50mm) HDPE -ICT [5.14 m] |
| RHD4CZ5L07ICT3200 | Installation of Road Crossings for ICT Network - (RD-L-7)-Z5-L07-ICT | 2026-08-17 → 2027-02-20 (+187d) | 2026-08-20 → 2027-02-24 (+188d) |  |
| RHD4CZ5L07ICT3300 | Pouring of Road Crossings for ICT Network - (RD-L-7)-Z5-L07-ICT | 2026-08-22 → 2027-02-25 (+187d) | 2026-08-25 → 2027-03-01 (+188d) |  |
| RHD4CZ5L07ICT3400 | Backfilling of Road Crossings for ICT Network - (RD-L-7)-Z5-L07-ICT | 2026-08-26 → 2027-03-02 (+188d) | 2026-08-29 → 2027-03-04 (+187d) | resources Skilled labor [27.99 h]; Unskilled Labor [27.99 h]; Equipment Opreator [11.22 h]; Excavator-Poclain [11.22 h]; Road crossing ducts, (2*50mm) HDPE -ICT [7.71 m] → Skilled labor [28 h]; Unskilled Labor [28 h]; Equipment Opreator [11.2 h]; Excavator-Poclain [11.2 h]; Road crossing ducts, (2*50mm) HDPE -ICT [7.71 m] |
| 3525 | **RHD4-02-002-Z5-L07-Security Network - CCTV** | 2027-10-16 → 2028-05-14 (+211d) | 2027-11-16 → 2028-06-14 (+211d) |  |

| ID | Task | Start | Finish | Other |
| --- | --- | --- | --- | --- |
| 3526 | **RHD4-02-002-L07-(CCTV)-Civil Works** | 2027-10-16 → 2028-05-14 (+211d) | 2027-10-26 → 2028-05-24 (+211d) |  |
| RHD4CZ5L07CCTV2100 | Civil Works for Security Network - (RD-L-7)-Z5-L07-CCTV | 2027-10-16 → 2028-05-14 (+211d) | 2027-10-26 → 2028-05-24 (+211d) |  |
| 3527 | **RHD4-02-002-L07-(CCTV)-CCTV Poles** | 2027-10-27 → 2028-05-25 (+211d) | 2027-11-07 → 2028-06-05 (+211d) |  |
| RHD4CZ5L07CCTV1100 | Excavation for RC Base for CCTV Poles for Security Network - (RD-L-7)-Z5-L07-CCTV | 2027-10-27 → 2028-05-25 (+211d) | 2027-10-28 → 2028-05-27 (+212d) |  |
| RHD4CZ5L07CCTV1200 | Installation for RC Base for CCTV Poles for Security Network - (RD-L-7)-Z5-L07-CCTV | 2027-10-30 → 2028-05-28 (+211d) | 2027-10-31 → 2028-05-29 (+211d) |  |
| RHD4CZ5L07CCTV1300 | Backfill for RC Base for CCTV Poles for Security Network - (RD-L-7)-Z5-L07-CCTV | 2027-11-01 → 2028-05-30 (+211d) | 2027-11-02 → 2028-05-31 (+211d) |  |
| RHD4CZ5L07CCTV1400 | Installation for CCTV Poles for Security Network - (RD-L-7)-Z5-L07-CCTV | 2027-11-03 → 2028-06-01 (+211d) | 2027-11-04 → 2028-06-03 (+212d) |  |
| RHD4CZ5L07CCTV1500 | Protection post Installation for CCTV Poles for Security Network - (RD-L-7)-Z5-L07-CCTV | 2027-11-06 → 2028-06-04 (+211d) | 2027-11-07 → 2028-06-05 (+211d) |  |
| 3528 | **RHD4-02-002-L07-(CCTV)-Camera** | 2027-11-08 → 2028-06-06 (+211d) | 2027-11-09 → 2028-06-07 (+211d) |  |
| RHD4CZ5L07CCTV3100 | Installation for Cameras for Security Network - (RD-L-7)-Z5-L07-CCTV | 2027-11-08 → 2028-06-06 (+211d) | 2027-11-09 → 2028-06-07 (+211d) |  |
| 3529 | **RHD4-02-002-L07-(CCTV)-Power and Infrastructure** | 2027-11-06 → 2028-06-04 (+211d) | 2027-11-09 → 2028-06-07 (+211d) |  |
| RHD4CZ5L07CCTV4100 | Installation of Power outlet, UPS and midspan for PTZ Camerafor Cameras for Security Network - (RD-L-7)-Z5-L07-CCTV | 2027-11-06 → 2028-06-04 (+211d) | 2027-11-07 → 2028-06-05 (+211d) |  |
| RHD4CZ5L07CCTV4200 | Short Range Wireless PoP wireless Bridgefor CCTV Poles for Security Network - (RD-L-7)-Z5-L07-CCTV | 2027-11-08 → 2028-06-06 (+211d) | 2027-11-09 → 2028-06-07 (+211d) |  |
| 3531 | **RHD4-02-002-L07-(CCTV)-CCTV Panels and Components** | 2027-11-10 → 2028-06-08 (+211d) | 2027-11-16 → 2028-06-14 (+211d) |  |
| RHD4CZ5L07CCTV6100 | Installation for CCTV Panels for Security Network - (RD-L-7)-Z5-L07-CCTV | 2027-11-10 → 2028-06-08 (+211d) | 2027-11-16 → 2028-06-14 (+211d) |  |
| 2217 | **RHD4-02-002-Z4** | 2026-08-10 → 2026-06-30 (-41d) | 2027-09-16 → 2028-03-16 (+182d) |  |
| 8270 | **RHD4-02-002-Z4-L01** | 2026-08-31 → 2027-01-09 (+131d) | 2027-04-24 → 2027-10-17 (+176d) |  |
| 8449 | **RHD4-02-002-Z4-L01-Road Works - RD** | 2026-09-12 → 2027-01-20 (+130d) | 2027-04-08 → 2027-10-02 (+177d) |  |
| 8450 | **RHD4-02-002-L01-(RD)-Subgrade** | 2026-09-12 → 2027-01-20 (+130d) | 2026-09-13 → 2027-01-21 (+130d) |  |
| RHD4CZ4L01RD1100 | Supply, lay and compaction subgrade compacted thickness 300 mm for Roads - (RD-L-1)-Z4-L01-RD | 2026-09-12 → 2027-01-20 (+130d) | 2026-09-13 → 2027-01-21 (+130d) |  |
| 8451 | **RHD4-02-002-L01-(RD)-Aggregate Base Course** | 2026-09-14 → 2027-01-23 (+131d) | 2026-09-15 → 2027-01-24 (+131d) |  |
| RHD4CZ4L01RD2100 | Supply, lay and compaction Aggregate base course compacted thickness 300 mmfor Roads - (RD-L-1)-Z4-L01-RD | 2026-09-14 → 2027-01-23 (+131d) | 2026-09-15 → 2027-01-24 (+131d) | resources Skilled labor [4.79 h]; Unskilled Labor [9.69 h]; Equipment Opreator [61.31 h]; Water Truck [3.16 h]; Roller compactor [9.69 h]; Grader [9.69 h]; Dump Truck [38.77 h]; Aggregate Base Courses [394.78 m3] → Skilled labor [4.8 h]; Unskilled Labor [9.69 h]; Equipment Opreator [61.31 h]; Water Truck [3.16 h]; Roller compactor [9.69 h]; Grader [9.69 h]; Dump Truck [38.77 h]; Aggregate Base Courses [394.78 m3] |
| 8452 | **RHD4-02-002-L01-(RD)-Bituminous base course Two Layers, including (MC1)&(RC2)** | 2026-09-16 → 2027-04-08 (+204d) | 2027-03-27 → 2027-09-18 (+175d) |  |
| RHD4CZ4L01RD3100 | Supply, lay and Asphaltic base course including Prime Coat (MC1) for 1st Layer - (RD-L-1)-Z4-L01-RD | 2026-09-16 → 2027-04-08 (+204d) | 2026-09-17 → 2027-04-10 (+205d) |  |
| RHD4CZ4L01RD3200 | Supply, lay and Asphaltic base course including Tack Coat (RC2) for 2nd Layer - (RD-L-1)-Z4-L01-RD | 2027-03-25 → 2027-09-16 (+175d) | 2027-03-27 → 2027-09-18 (+175d) |  |
| 8454 | **RHD4-02-002-L01-(RD)-Precast Concrete Curb** | 2027-03-28 → 2027-09-19 (+175d) | 2027-04-01 → 2027-09-25 (+177d) |  |
| RHD4CZ4L01RD5100 | Supply and installation Precast Concrete Kerb for Roads - (RD-L-1)-Z4-L01-RD | 2027-03-28 → 2027-09-19 (+175d) | 2027-04-01 → 2027-09-25 (+177d) | resources Mason [141.57 h]; Skilled labor [47.16 h]; Unskilled Labor [141.57 h]; Equipment Opreator [94.42 h]; Bobcat [47.16 h]; Concrete Mixer Truck [47.16 h]; Precast Concrete Curbstone, type K1 [1950 m] → Mason [141.6 h]; Skilled labor [47.16 h]; Unskilled Labor [141.6 h]; Equipment Opreator [94.4 h]; Bobcat [47.16 h]; Concrete Mixer Truck [47.16 h]; Precast Concrete Curbstone, type K1 [1950 m] |
| 8457 | **RHD4-02-002-L01-(RD)-Traffic Signage** | 2027-04-03 → 2027-09-26 (+176d) | 2027-04-08 → 2027-10-02 (+177d) |  |
| RHD4CZ4L01RD8100 | Installation of Traffic Signage for Road Network - (RD-L-1)-Z4-L01-RD | 2027-04-03 → 2027-09-26 (+176d) | 2027-04-08 → 2027-10-02 (+177d) |  |
| 8453 | **RHD4-02-002-L01-(RD)-Bituminous concrete wearing course including tack coat (RC2)** | 2027-04-03 → 2027-09-26 (+176d) | 2027-04-04 → 2027-09-27 (+176d) |  |
| RHD4CZ4L01RD4100 | Supply, lay and compaction Asphaltic wearing course including tack Coat (RC2)for Road Network - (RD-L-1)-Z4-L01-RD | 2027-04-03 → 2027-09-26 (+176d) | 2027-04-04 → 2027-09-27 (+176d) |  |
| 8456 | **RHD4-02-002-L01-(RD)-Pavement Marking** | 2027-04-05 → 2027-09-28 (+176d) | 2027-04-08 → 2027-10-02 (+177d) |  |
| RHD4CZ4L01RD7100 | Pavement Markings for Road Network - (RD-L-1)-Z4-L01-RD | 2027-04-05 → 2027-09-28 (+176d) | 2027-04-08 → 2027-10-02 (+177d) |  |
| 8360 | **RHD4-02-002-Z4-L01-Potable Network - PT** | 2026-12-28 → 2027-06-15 (+169d) | 2027-01-21 → 2027-07-10 (+170d) |  |
| 8362 | **RHD4-02-002-L01-(PT)-HDPE Pipes - 160 mm diameter** | 2026-12-28 → 2027-06-15 (+169d) | 2027-01-10 → 2027-06-28 (+169d) |  |
| RHD4CZ4L01PT1101 | Excavation works for HDPE Pipline 160 mm - (RD-L-1)-Z4-L01-PT | 2026-12-28 → 2027-06-15 (+169d) | 2026-12-29 → 2027-06-16 (+169d) |  |
| RHD4CZ4L01PT1201 | Bedding works for HDPE Pipline 160 mm - (RD-L-1)-Z4-L01-PT | 2026-12-30 → 2027-06-17 (+169d) | 2026-12-31 → 2027-06-19 (+170d) |  |
| RHD4CZ4L01PT1301 | Installing for HDPE Pipline 160 mm - (RD-L-1)-Z4-L01-PT | 2027-01-02 → 2027-06-20 (+169d) | 2027-01-03 → 2027-06-21 (+169d) |  |
| RHD4CZ4L01PT1401 | Primary Test for HDPE Pipline 160 mm - (RD-L-1)-Z4-L01-PT | 2027-01-06 → 2027-06-24 (+169d) | 2027-01-07 → 2027-06-26 (+170d) |  |
| RHD4CZ4L01PT1501 | Backfilling and warning tape works for HDPE Pipline 160 mm - (RD-L-1)-Z4-L01-PT | 2027-01-09 → 2027-06-27 (+169d) | 2027-01-10 → 2027-06-28 (+169d) |  |
| 8366 | **RHD4-02-002-L01-(PT)-Gate Valves (Direct Buried)** | 2027-01-04 → 2027-06-22 (+169d) | 2027-01-12 → 2027-06-30 (+169d) |  |
| RHD4CZ4L01PT3100 | Installation for Direct Buried Gate Valves - (RD-L-1)-Z4-L01-PT | 2027-01-04 → 2027-06-22 (+169d) | 2027-01-05 → 2027-06-23 (+169d) |  |
| RHD4CZ4L01PT3200 | Stem and Service box for Direct Buried Gate Valves - (RD-L-1)-Z4-L01-PT | 2027-01-11 → 2027-06-29 (+169d) | 2027-01-12 → 2027-06-30 (+169d) |  |
| 8373 | **RHD4-02-002-L01-(PT)-Fire Hydrant** | 2027-01-11 → 2027-06-29 (+169d) | 2027-01-21 → 2027-07-10 (+170d) |  |
| RHD4CZ4L01PT4100 | Excavation and Bedding and Pipe Installation for Fire Hydrant - (RD-L-1)-Z4-L01-PT | 2027-01-11 → 2027-06-29 (+169d) | 2027-01-12 → 2027-06-30 (+169d) |  |
| RHD4CZ4L01PT4200 | Valve Installation for Fire Hydrant - (RD-L-1)-Z4-L01-PT | 2027-01-13 → 2027-07-01 (+169d) | 2027-01-14 → 2027-07-03 (+170d) |  |
| RHD4CZ4L01PT4300 | Stem for Fire Hydrant - (RD-L-1)-Z4-L01-PT | 2027-01-16 → 2027-07-04 (+169d) | 2027-01-17 → 2027-07-05 (+169d) |  |
| RHD4CZ4L01PT4400 | Fire Installation for Fire Hydrant - (RD-L-1)-Z4-L01-PT | 2027-01-18 → 2027-07-06 (+169d) | 2027-01-19 → 2027-07-07 (+169d) |  |
| RHD4CZ4L01PT4500 | Protection Barriers for Fire Hydrant - (RD-L-1)-Z4-L01-PT | 2027-01-20 → 2027-07-08 (+169d) | 2027-01-21 → 2027-07-10 (+170d) |  |
| 8409 | **RHD4-02-002-Z4-L01-Medium Voltage Network - MV** | 2026-08-31 → 2027-01-09 (+131d) | 2026-10-06 → 2027-04-27 (+203d) |  |
| 8410 | **RHD4-02-002-L01-(MV)-Medium Voltage cable trench** | 2026-09-19 → 2027-04-11 (+204d) | 2026-10-04 → 2027-04-25 (+203d) |  |
| RHD4CZ4L01MV1100 | Excavation for Medium Voltage Trench - (RD-L-1)-Z4-L01-MV | 2026-09-19 → 2027-04-11 (+204d) | 2026-09-20 → 2027-04-12 (+204d) |  |
| RHD4CZ4L01MV1200 | Trench Backfilling for Medium Voltage Network - (RD-L-1)-Z4-L01-MV | 2026-10-03 → 2027-04-24 (+203d) | 2026-10-04 → 2027-04-25 (+203d) |  |
| 8411 | **RHD4-02-002-L01-(MV)-Medium Voltage duct banks** | 2026-08-31 → 2027-01-09 (+131d) | 2026-09-09 → 2027-01-18 (+131d) |  |
| RHD4CZ4L01MV2100 | Excavation of Duct Banks for Medium Voltage Network - (RD-L-1)-Z4-L01-MV | 2026-08-31 → 2027-01-09 (+131d) | 2026-09-01 → 2027-01-10 (+131d) |  |
| RHD4CZ4L01MV2200 | Installation of Duct Banks for Medium Voltage Network - (RD-L-1)-Z4-L01-MV | 2026-09-02 → 2027-01-11 (+131d) | 2026-09-05 → 2027-01-13 (+130d) |  |
| RHD4CZ4L01MV2300 | Pouring of Duct Banks for Medium Voltage Network - (RD-L-1)-Z4-L01-MV | 2026-09-06 → 2027-01-14 (+130d) | 2026-09-07 → 2027-01-16 (+131d) |  |
| RHD4CZ4L01MV2400 | Backfilling of Duct Banks for Medium Voltage Network - (RD-L-1)-Z4-L01-MV | 2026-09-08 → 2027-01-17 (+131d) | 2026-09-09 → 2027-01-18 (+131d) |  |
| 8412 | **RHD4-02-002-L01-(MV)-Medium Voltage cables 3Cx 500 mm²** | 2026-09-21 → 2027-04-13 (+204d) | 2026-10-06 → 2027-04-27 (+203d) |  |
| RHD4CZ4L01MV3100 | Installation of Medium Voltage Cables 3Cx 500 mm² - (RD-L-1)-Z4-L01-MV | 2026-09-21 → 2027-04-13 (+204d) | 2026-09-29 → 2027-04-20 (+203d) |  |
| RHD4CZ4L01MV3200 | Joints Installation of Medium Voltage Cables 3Cx 500 mm² - (RD-L-1)-Z4-L01-MV | 2026-09-30 → 2027-04-21 (+203d) | 2026-10-01 → 2027-04-22 (+203d) |  |
| RHD4CZ4L01MV3300 | Testing of Medium Voltage Cables 3Cx 500 mm² - (RD-L-1)-Z4-L01-MV | 2026-10-05 → 2027-04-26 (+203d) | 2026-10-06 → 2027-04-27 (+203d) |  |
| 8416 | **RHD4-02-002-Z4-L01-Low Voltage Network - LV** | 2026-09-02 → 2027-01-11 (+131d) | 2027-02-27 → 2027-08-18 (+172d) |  |
| 8417 | **RHD4-02-002-L01-(LV)-Low Voltage duct banks** | 2026-09-02 → 2027-01-11 (+131d) | 2026-09-10 → 2027-01-19 (+131d) |  |
| RHD4CZ4L01LV2100 | Excavation of Duct Banks for Low Voltage Network - (RD-L-1)-Z4-L01-LV | 2026-09-02 → 2027-01-11 (+131d) | 2026-09-03 → 2027-01-12 (+131d) |  |
| RHD4CZ4L01LV2200 | Installation of Duct Banks for Low Voltage Network - (RD-L-1)-Z4-L01-LV | 2026-09-05 → 2027-01-13 (+130d) | 2026-09-06 → 2027-01-14 (+130d) |  |
| RHD4CZ4L01LV2300 | Pouring of Duct Banks for Low Voltage Network - (RD-L-1)-Z4-L01-LV | 2026-09-07 → 2027-01-16 (+131d) | 2026-09-08 → 2027-01-17 (+131d) |  |
| RHD4CZ4L01LV2400 | Backfilling of Duct Banks for Low Voltage Network - (RD-L-1)-Z4-L01-LV | 2026-09-09 → 2027-01-18 (+131d) | 2026-09-10 → 2027-01-19 (+131d) |  |
| 8419 | **RHD4-02-002-L01-(LV)-Low Voltage cables** | 2027-02-17 → 2027-08-10 (+174d) | 2027-02-27 → 2027-08-18 (+172d) |  |
| RHD4CZ4L01LV3100 | Excavation for Low Voltage Cables for Low Voltage Network - (RD-L-1)-Z4-L01-LV | 2027-02-17 → 2027-08-10 (+174d) | 2027-02-18 → 2027-08-11 (+174d) |  |

| ID | Task | Start | Finish | Duration | Complete | Other |
| --- | --- | --- | --- | --- | --- | --- |
| RHD4CZ4L01LV3200 | Cable Laying of Low Voltage Cables for Low Voltage Network - (RD-L-1)-Z4-L01-LV | 2027-02-20 → 2027-08-12 (+173d) | 2027-02-21 → 2027-08-14 (+174d) |  |  |  |
| RHD4CZ4L01LV3300 | Warning tape and Backfill for Low Voltage Cables for Low Voltage Network - (RD-L-1)-Z4-L01-LV | 2027-02-23 → 2027-08-15 (+173d) | 2027-02-24 → 2027-08-16 (+173d) |  |  |  |
| RHD4CZ4L01LV3400 | Testing of Low Voltage Cables for Low Voltage Network - (RD-L-1)-Z4-L01-LV | 2027-02-25 → 2027-08-17 (+173d) | 2027-02-27 → 2027-08-18 (+172d) |  |  |  |
| 8422 | **RHD4-02-002-Z4-L01-Street Lighting Network - SL** | 2027-01-13 → 2027-07-01 (+169d) | 2027-03-08 → 2027-08-28 (+173d) |  |  |  |
| 8423 | **RHD4-02-002-L01-(SL)-Street Lighting duct banks** | 2027-01-13 → 2027-07-01 (+169d) | 2027-01-21 → 2027-07-10 (+170d) |  |  |  |
| RHD4CZ4L01SL2100 | Excavation of Duct Banks for Street Lighting Network - (RD-L-1)-Z4-L01-SL | 2027-01-13 → 2027-07-01 (+169d) | 2027-01-14 → 2027-07-03 (+170d) |  |  | resources Skilled labor [14.05 h]; Unskilled Labor [14.05 h]; Equipment Opreator [27.99 h]; Excavator-Poclain [14.05 h]; Dump Truck [14.05 h]; Road Crossing Duct for Street Lighting cables UPVC (2x?110mm) [1.93 m] → Skilled labor [14.05 h]; Unskilled Labor [14.05 h]; Equipment Opreator [28 h]; Excavator-Poclain [14.05 h]; Dump Truck [14.05 h]; Road Crossing Duct for Street Lighting cables UPVC (2x?110mm) [1.93 m] |
| RHD4CZ4L01SL2200 | Installation of Duct Banks for Street Lighting Network - (RD-L-1)-Z4-L01-SL | 2027-01-16 → 2027-07-04 (+169d) | 2027-01-17 → 2027-07-05 (+169d) |  |  |  |
| RHD4CZ4L01SL2300 | Pouring of Duct Banks for Street Lighting Network - (RD-L-1)-Z4-L01-SL | 2027-01-18 → 2027-07-06 (+169d) | 2027-01-19 → 2027-07-07 (+169d) |  |  |  |
| RHD4CZ4L01SL2400 | Backfilling of Duct Banks for Street Lighting Network - (RD-L-1)-Z4-L01-SL | 2027-01-20 → 2027-07-08 (+169d) | 2027-01-21 → 2027-07-10 (+170d) |  |  |  |
| 8424 | **RHD4-02-002-L01-(SL)-Street Lighting Drawpit** | 2027-03-04 → 2027-08-24 (+173d) | 2027-03-08 → 2027-08-28 (+173d) |  |  |  |
| RHD4CZ4L01SL5100 | Excavation of Drawpit size 600x600x900mm for Street Lighting Network - (RD-L-1)-Z4-L01-SL | 2027-03-04 → 2027-08-24 (+173d) | 2027-03-06 → 2027-08-25 (+172d) |  |  | resources Skilled labor [1.85 h]; Unskilled Labor [1.85 h]; Equipment Opreator [1.42 h]; Excavator-Poclain [0.76 h]; Dump Truck [0.76 h]; Drawpit with medium duty steel cover, size600x600x900mm, [0.3 Unit] → Skilled labor [1.85 h]; Unskilled Labor [1.85 h]; Equipment Opreator [1.42 h]; Excavator-Poclain [0.8 h]; Dump Truck [0.8 h]; Drawpit with medium duty steel cover, size600x600x900mm, [0.3 Unit] |
| RHD4CZ4L01SL5200 | Installation of Drawpit size 600x600x900mm for Street Lighting Network - (RD-L-1)-Z4-L01-SL | 2027-03-07 → 2027-08-26 (+172d) | 2027-03-08 → 2027-08-28 (+173d) |  |  | resources Skilled labor [1.85 h]; Unskilled Labor [1.85 h]; Equipment Opreator [0.76 h]; Boom Truck [0.76 h]; Drawpit with medium duty steel cover, size600x600x900mm, [1.7 Unit] → Skilled labor [1.85 h]; Unskilled Labor [1.85 h]; Equipment Opreator [0.8 h]; Boom Truck [0.8 h]; Drawpit with medium duty steel cover, size600x600x900mm, [1.7 Unit] |
| 8425 | **RHD4-02-002-L01-(SL)-Street Lighting cables** | 2027-02-10 → 2027-08-03 (+174d) | 2027-03-01 → 2027-08-21 (+173d) |  |  |  |
| RHD4CZ4L01SL3100 | Excavation for Street Lighting Cables for Street Lighting Network - (RD-L-1)-Z4-L01-SL | 2027-02-10 → 2027-08-03 (+174d) | 2027-02-11 → 2027-08-04 (+174d) |  |  |  |
| RHD4CZ4L01SL3200 | Cable Laying of Street Lighting Cables for Street Lighting Network - (RD-L-1)-Z4-L01-SL | 2027-02-13 → 2027-08-05 (+173d) | 2027-02-14 → 2027-08-07 (+174d) |  |  |  |
| RHD4CZ4L01SL3300 | Warning tape and Backfill for Street Lighting Cables for Street Lighting Network - (RD-L-1)-Z4-L01-SL | 2027-02-15 → 2027-08-08 (+174d) | 2027-02-16 → 2027-08-09 (+174d) |  |  |  |
| RHD4CZ4L01SL3400 | Testing of Street Lighting Cables for Street Lighting Network - (RD-L-1)-Z4-L01-SL | 2027-02-28 → 2027-08-19 (+172d) | 2027-03-01 → 2027-08-21 (+173d) |  |  |  |
| 8426 | **RHD4-02-002-L01-(SL)-Street Lighting Poles** | 2027-02-03 → 2027-07-27 (+174d) | 2027-03-06 → 2027-08-25 (+172d) |  |  |  |
| RHD4CZ4L01SL1100 | Excavation for RC Base for Lighting Poles for Street Lighting Network - (RD-L-1)-Z4-L01-SL | 2027-02-03 → 2027-07-27 (+174d) | 2027-02-04 → 2027-07-28 (+174d) |  |  |  |
| RHD4CZ4L01SL1200 | Installation for RC Base for Lighting Poles for Street Lighting Network - (RD-L-1)-Z4-L01-SL | 2027-02-06 → 2027-07-29 (+173d) | 2027-02-07 → 2027-07-31 (+174d) |  |  |  |
| RHD4CZ4L01SL1300 | Backfill for RC Base for Lighting Poles for Street Lighting Network - (RD-L-1)-Z4-L01-SL | 2027-02-08 → 2027-08-01 (+174d) | 2027-02-09 → 2027-08-02 (+174d) |  |  |  |
| RHD4CZ4L01SL1400 | Installation for Lighting Poles for Street Lighting Network - (RD-L-1)-Z4-L01-SL | 2027-03-02 → 2027-08-22 (+173d) | 2027-03-03 → 2027-08-23 (+173d) |  |  |  |
| RHD4CZ4L01SL1500 | Luminaire Installation for Lighting Poles for Street Lighting Network - (RD-L-1)-Z4-L01-SL | 2027-03-04 → 2027-08-24 (+173d) | 2027-03-06 → 2027-08-25 (+172d) |  |  |  |
| 8434 | **RHD4-02-002-Z4-L01-Telecommunications Network - TC** | 2027-03-07 → 2027-08-26 (+172d) | 2027-03-16 → 2027-09-01 (+169d) |  |  |  |
| 8435 | **RHD4-02-002-L01-(TC)-Telecommunications Ducts** | 2027-03-07 → 2027-08-26 (+172d) | 2027-03-16 → 2027-09-01 (+169d) |  |  |  |
| RHD4CZ4L01TC2100 | Excavation of HDPE Ducts for Telecom Network - (RD-L-1)-Z4-L01-TC | 2027-03-07 → 2027-08-26 (+172d) | 2027-03-08 → 2027-08-28 (+173d) |  |  |  |
| RHD4CZ4L01TC2200 | Installation of HDPE Ducts for Telecom Network - (RD-L-1)-Z4-L01-TC | 2027-03-13 → 2027-08-29 (+169d) | 2027-03-14 → 2027-08-30 (+169d) |  |  |  |
| RHD4CZ4L01TC2400 | Backfilling of HDPE Ducts for Telecom Network - (RD-L-1)-Z4-L01-TC | 2027-03-15 → 2027-08-31 (+169d) | 2027-03-16 → 2027-09-01 (+169d) |  |  | resources Skilled labor [10.02 h]; Unskilled Labor [10.02 h]; Equipment Opreator [4.03 h]; Excavator-Poclain [4.03 h]; (6*50mm) HDPE ducts -TC [20.62 m] → Skilled labor [10.02 h]; Unskilled Labor [10.02 h]; Equipment Opreator [4 h]; Excavator-Poclain [4 h]; (6*50mm) HDPE ducts -TC [20.62 m] |
| 8438 | **RHD4-02-002-Z4-L01-Information and Communication Technologies - ICT** | 2027-03-13 → 2027-08-29 (+169d) | 2027-03-18 → 2027-09-04 (+170d) |  |  |  |
| 8439 | **RHD4-02-002-L01-(ICT)-Information and Communication Technologies Ducts** | 2027-03-13 → 2027-08-29 (+169d) | 2027-03-18 → 2027-09-04 (+170d) |  |  |  |
| RHD4CZ4L01ICT2100 | Excavation of HDPE Ducts for ICT Network - (RD-L-1)-Z4-L01-ICT | 2027-03-13 → 2027-08-29 (+169d) | 2027-03-14 → 2027-08-30 (+169d) |  |  |  |
| RHD4CZ4L01ICT2200 | Installation of HDPE Ducts for ICT Network - (RD-L-1)-Z4-L01-ICT | 2027-03-15 → 2027-08-31 (+169d) | 2027-03-16 → 2027-09-01 (+169d) |  |  |  |
| RHD4CZ4L01ICT2400 | Backfilling of HDPE Ducts for ICT Network - (RD-L-1)-Z4-L01-ICT | 2027-03-17 → 2027-09-02 (+169d) | 2027-03-18 → 2027-09-04 (+170d) |  |  |  |
| 8442 | **RHD4-02-002-Z4-L01-Security Network - CCTV** | 2027-03-20 → 2027-09-05 (+169d) | 2027-04-24 → 2027-10-17 (+176d) |  |  |  |
| 8443 | **RHD4-02-002-L01-(CCTV)-Civil Works** | 2027-03-20 → 2027-09-05 (+169d) | 2027-03-24 → 2027-09-15 (+175d) |  |  |  |
| RHD4CZ4L01CCTV2100 | Civil Works for Security Network - (RD-L-1)-Z4-L01-CCTV | 2027-03-20 → 2027-09-05 (+169d) | 2027-03-24 → 2027-09-15 (+175d) | 5d → 10d |  |  |
| 2959 | **RHD4-02-002-L01-(CCTV)-CCTV Poles** | 2027-03-25 → 2027-09-16 (+175d) | 2027-04-05 → 2027-09-28 (+176d) |  |  |  |
| RHD4CZ4L01CCTV1100 | Excavation for RC Base for CCTV Poles for Security Network - (RD-L-1)-Z4-L01-CCTV | 2027-03-25 → 2027-09-16 (+175d) | 2027-03-27 → 2027-09-18 (+175d) |  |  | resources Skilled labor [4.32 h]; Unskilled Labor [4.32 h]; Equipment Opreator [8.64 h]; Excavator-Poclain [2.18 h]; Dump Truck [2.18 h]; 25 Meters pole for CCTV Cameras [0.1 nr] → Skilled labor [4.32 h]; Unskilled Labor [4.32 h]; Equipment Opreator [8.64 h]; Excavator-Poclain [2.16 h]; Dump Truck [2.16 h]; 25 Meters pole for CCTV Cameras [0.1 nr] |
| RHD4CZ4L01CCTV1200 | Installation for RC Base for CCTV Poles for Security Network - (RD-L-1)-Z4-L01-CCTV | 2027-03-28 → 2027-09-19 (+175d) | 2027-03-29 → 2027-09-20 (+175d) |  |  | resources Skilled labor [4.32 h]; Unskilled Labor [4.32 h]; Equipment Opreator [8.64 h]; Excavator-Poclain [2.18 h]; Dump Truck [2.18 h]; 25 Meters pole for CCTV Cameras [0.25 nr] → Skilled labor [4.32 h]; Unskilled Labor [4.32 h]; Equipment Opreator [8.64 h]; Excavator-Poclain [2.16 h]; Dump Truck [2.16 h]; 25 Meters pole for CCTV Cameras [0.25 nr] |
| RHD4CZ4L01CCTV1300 | Backfill for RC Base for CCTV Poles for Security Network - (RD-L-1)-Z4-L01-CCTV | 2027-03-30 → 2027-09-21 (+175d) | 2027-03-31 → 2027-09-25 (+178d) | 2d → 2.03d |  | resources Skilled labor [2.88 h]; Unskilled Labor [2.88 h]; Equipment Opreator [5.44 h]; Excavator-Poclain [1.42 h]; Dump Truck [1.42 h]; 25 Meters pole for CCTV Cameras [0.05 nr] → Skilled labor [2.88 h]; Unskilled Labor [2.88 h]; Equipment Opreator [5.44 h]; Excavator-Poclain [1.44 h]; Dump Truck [1.44 h]; 25 Meters pole for CCTV Cameras [0.05 nr] |
| RHD4CZ4L01CCTV1400 | Installation for CCTV Poles for Security Network - (RD-L-1)-Z4-L01-CCTV | 2027-04-01 → 2027-09-25 (+177d) | 2027-04-03 → 2027-09-27 (+177d) |  |  | resources Skilled labor [7.2 h]; Unskilled Labor [14.56 h]; Electrician [7.2 h]; Equipment Opreator [7.2 h]; Boom Truck [3.59 h]; 25 Meters pole for CCTV Cameras [0.6 nr] → Skilled labor [7.2 h]; Unskilled Labor [14.56 h]; Electrician [7.2 h]; Equipment Opreator [7.2 h]; Boom Truck [3.6 h]; 25 Meters pole for CCTV Cameras [0.6 nr] |
| RHD4CZ4L01CCTV1500 | Protection post Installation for CCTV Poles for Security Network - (RD-L-1)-Z4-L01-CCTV | 2027-04-04 → 2027-09-27 (+176d) | 2027-04-05 → 2027-09-28 (+176d) |  |  |  |
| 2960 | **RHD4-02-002-L01-(CCTV)-Camera** | 2027-04-06 → 2027-09-29 (+176d) | 2027-04-07 → 2027-09-30 (+176d) |  |  |  |
| RHD4CZ4L01CCTV3100 | Installation for Cameras for Security Network - (RD-L-1)-Z4-L01-CCTV | 2027-04-06 → 2027-09-29 (+176d) | 2027-04-07 → 2027-09-30 (+176d) |  |  |  |
| 2961 | **RHD4-02-002-L01-(CCTV)-Power and Infrastructure** | 2027-04-04 → 2027-09-27 (+176d) | 2027-04-07 → 2027-09-30 (+176d) |  |  |  |
| RHD4CZ4L01CCTV4100 | Installation of Power outlet, UPS and midspan for PTZ Camerafor Cameras for Security Network - (RD-L-1)-Z4-L01-CCTV | 2027-04-04 → 2027-09-27 (+176d) | 2027-04-05 → 2027-09-29 (+177d) | 2d → 2.01d |  | resources Skilled labor [13.12 h]; Unskilled Labor [52.32 h]; Electrician [26.08 h]; Equipment Opreator [26.08 h]; Excavator-Poclain [6.53 h]; Dump Truck [6.53 h]; Outdoor ready IP66-rated midspan for PTZ Camera (The outdoor- ready midspan should be IP66/IP67- and NEMA 4X-rated [1 nr]; 1.2KVA Industrial type UPS located at FEC remote poles [2 nr] → Skilled labor [13.12 h]; Unskilled Labor [52.32 h]; Electrician [26.08 h]; Equipment Opreator [26.08 h]; Excavator-Poclain [6.56 h]; Dump Truck [6.56 h]; Outdoor ready IP66-rated midspan for PTZ Camera (The outdoor- ready midspan should be IP66/IP67- and NEMA 4X-rated [1 nr]; 1.2KVA Industrial type UPS located at FEC remote poles [2 nr] |
| RHD4CZ4L01CCTV4200 | Short Range Wireless PoP wireless Bridgefor CCTV Poles for Security Network - (RD-L-1)-Z4-L01-CCTV | 2027-04-06 → 2027-09-29 (+176d) | 2027-04-07 → 2027-09-30 (+176d) |  |  | resources Skilled labor [10.88 h]; Unskilled Labor [21.76 h]; Electrician [10.88 h]; Equipment Opreator [21.76 h]; Excavator-Poclain [5.45 h]; Dump Truck [5.45 h]; Short Range wireless point to point wireless bridge [2 nr] → Skilled labor [10.88 h]; Unskilled Labor [21.76 h]; Electrician [10.88 h]; Equipment Opreator [21.76 h]; Excavator-Poclain [5.44 h]; Dump Truck [5.44 h]; Short Range wireless point to point wireless bridge [2 nr] |
| 2963 | **RHD4-02-002-L01-(CCTV)-CCTV Panels and Components** | 2027-04-08 → 2027-10-02 (+177d) | 2027-04-24 → 2027-10-17 (+176d) |  |  |  |
| RHD4CZ4L01CCTV6100 | Installation for CCTV Panels for Security Network - (RD-L-1)-Z4-L01-CCTV | 2027-04-08 → 2027-10-02 (+177d) | 2027-04-24 → 2027-10-17 (+176d) |  |  |  |
| 2974 | **RHD4-02-002-Z4-A013** | 2026-08-11 → 2026-06-30 (-42d) | 2027-07-10 → 2028-01-26 (+200d) |  |  |  |
| 3153 | **RHD4-02-002-Z4-A013-Road Works - RD** | 2026-08-18 → 2026-06-30 (-49d) | 2027-07-10 → 2028-01-26 (+200d) |  |  |  |
| 3154 | **RHD4-02-002-A013-(RD)-Subgrade** | 2026-08-18 → 2026-06-30 (-49d) | 2026-08-23 → 2026-07-09 (-45d) |  |  |  |
| RHD4CZ4A013RD1100 | Supply, lay and compaction subgrade compacted thickness 300 mm for Roads - (RD-A-1 /3)-Z4-A013-RD | 2026-08-18 → 2026-06-30 A (-49d) | 2026-08-23 → 2026-07-09 A (-45d) |  | 0% → 100% |  |
| 3155 | **RHD4-02-002-A013-(RD)-Aggregate Base Course** | 2026-08-24 → 2026-09-30 (+37d) | 2026-08-29 → 2026-10-27 (+59d) |  |  |  |
| RHD4CZ4A013RD2100 | Supply, lay and compaction Aggregate base course compacted thickness 300 mmfor Roads - (RD-A-1 /3)-Z4-A013-RD | 2026-08-24 → 2026-09-30 A (+37d) | 2026-08-29 → 2026-10-27 A (+59d) |  | 0% → 100% |  |
| 3156 | **RHD4-02-002-A013-(RD)-Bituminous base course Two Layers, including (MC1)&(RC2)** | 2026-08-30 → 2026-10-14 (+45d) | 2027-04-14 → 2027-08-31 (+139d) |  |  |  |
| RHD4CZ4A013RD3100 | Supply, lay and Asphaltic base course including Prime Coat (MC1) for 1st Layer - (RD-A-1 /3)-Z4-A013-RD | 2026-08-30 → 2026-10-14 A (+45d) | 2026-09-03 → 2027-02-11 (+161d) | 5d → 10d | 0% → 82% |  |
| RHD4CZ4A013RD3200 | Supply, lay and Asphaltic base course including Tack Coat (RC2) for 2nd Layer - (RD-A-1 /3)-Z4-A013-RD | 2027-04-04 → 2027-08-21 (+139d) | 2027-04-14 → 2027-08-31 (+139d) |  |  |  |
| 3158 | **RHD4-02-002-A013-(RD)-Precast Concrete Curb** | 2027-04-15 → 2027-09-01 (+139d) | 2027-04-24 → 2027-09-09 (+138d) |  |  |  |
| RHD4CZ4A013RD5100 | Supply and installation Precast Concrete Kerb for Roads - (RD-A-1 /3)-Z4-A013-RD | 2027-04-15 → 2027-09-01 (+139d) | 2027-04-24 → 2027-09-09 (+138d) |  |  |  |
| 3161 | **RHD4-02-002-A013-(RD)-Traffic Signage** | 2027-04-25 → 2027-10-03 (+161d) | 2027-05-04 → 2027-10-12 (+161d) |  |  |  |
| RHD4CZ4A013RD8100 | Installation of Traffic Signage for Road Network - (RD-A-1 /3)-Z4-A013-RD | 2027-04-25 → 2027-10-03 (+161d) | 2027-05-04 → 2027-10-12 (+161d) |  |  | resources Skilled labor [196.03 h]; Unskilled Labor [98.01 h]; Electrician [50.1 h]; Equipment Opreator [39.64 h]; Boom Truck [19.6 h]; Concrete Mixer Truck [20.04 h]; Traffic signs, ground mounted, 1 Sheet Aluminium, (breakaway)Single post [43 nr]; Traffic signs, ground mounted, 1 Sheets Aluminium, (breakaway)Double post [1 nr] → Skilled labor [196 h]; Unskilled Labor [98.01 h]; Electrician [50.1 h]; Equipment Opreator [39.64 h]; Boom Truck [19.6 h]; Concrete Mixer Truck [20 h]; Traffic signs, ground mounted, 1 Sheet Aluminium, (breakaway)Single post [43 nr]; Traffic signs, ground mounted, 1 Sheets Aluminium, (breakaway)Double post [1 nr] |
| 3157 | **RHD4-02-002-A013-(RD)-Bituminous concrete wearing course including tack coat (RC2)** | 2027-04-25 → 2027-09-11 (+139d) | 2027-04-28 → 2027-09-14 (+139d) |  |  |  |
| RHD4CZ4A013RD4100 | Supply, lay and compaction Asphaltic wearing course including tack Coat (RC2)for Road Network - (RD-A-1 /3)-Z4-A013-RD | 2027-04-25 → 2027-09-11 (+139d) | 2027-04-28 → 2027-09-14 (+139d) |  |  |  |
| 3160 | **RHD4-02-002-A013-(RD)-Pavement Marking** | 2027-07-07 → 2028-01-24 (+201d) | 2027-07-10 → 2028-01-26 (+200d) |  |  |  |
| RHD4CZ4A013RD7100 | Pavement Markings for Road Network - (RD-A-1 /3)-Z4-A013-RD | 2027-07-07 → 2028-01-24 (+201d) | 2027-07-10 → 2028-01-26 (+200d) |  |  |  |
| 2978 | **RHD4-02-002-Z4-A013-Storm Network - ST** | 2026-08-11 → 2026-08-04 (-7d) | 2026-12-28 → 2027-04-28 (+121d) |  |  |  |
| 2428 | **RHD4-02-002-A013-(ST)-MH Works - 1200 mm diameter** | 2026-08-11 → 2026-08-04 (-7d) | 2026-08-22 → 2027-02-11 (+173d) |  |  |  |
| RHD4CZ4A013ST3100 | Excavation and PC Blinding works for MH 1200 mm - (RD-A-1 /3)-Z4-A013-ST | 2026-08-11 → 2026-08-04 A (-7d) | 2026-08-12 → 2026-09-04 A (+23d) |  | 0% → 100% |  |
| RHD4CZ4A013ST3200 | Installation of Base for MH 1200 mm - (RD-A-1 /3)-Z4-A013-ST | 2026-08-13 A | 2026-08-15 → 2026-09-06 A (+22d) |  | 0% → 100% |  |

| ID | Task | Start | Finish | Complete | Other |
| --- | --- | --- | --- | --- | --- |
| RHD4CZ4A013ST3300 | MH Ring and C.Slab works and Backfilling works for MH 1200 mm - (RD-A-1 /3)-Z4-A013-ST | 2026-08-16 A | 2026-08-17 → 2026-09-08 A (+22d) | 0% → 100% |  |
| RHD4CZ4A013ST3400 | Steel Cover for MH 1200 mm - (RD-A-1 /3)-Z4-A013-ST | 2026-08-18 → 2027-02-08 (+174d) | 2026-08-19 → 2027-02-09 (+174d) |  |  |
| RHD4CZ4A013ST3500 | Finishing, Benching, Testing works for MH 1200 mm - (RD-A-1 /3)-Z4-A013-ST | 2026-08-20 → 2027-02-10 (+174d) | 2026-08-22 → 2027-02-11 (+173d) |  |  |
| 2416 | **RHD4-02-002-A013-(ST)-GRP Pipes - 800 mm diameter** |  | 2026-08-27 → 2027-02-09 (+166d) |  |  |
| RHD4CZ4A013ST1104 | Excavation works for GRP Pipe Line 800 mm - (RD-A-1 /3)-Z4-A013-ST | 2026-08-13 A | 2026-08-16 → 2026-08-29 A (+13d) | 0% → 100% | resources Skilled labor [32.13 h]; Unskilled Labor [32.13 h]; Equipment Opreator [38.55 h]; Excavator-Poclain [32.13 h]; Dump Truck [6.43 h]; GRP (800mm Diameter) - ST - Depth less than 1.5 m [19.7 m]; GRP (800mm Diameter) - ST - Depth: 1.51m - 2.5m [14.76 m]; GRP (800mm Diameter) - ST - Depth: 2.51m - 3.5m [29.52 m]; GRP (800mm Diameter) - ST - Depth: 3.51m - 4.5m [22.13 m] → Skilled labor [32.13 h]; Unskilled Labor [32.13 h]; Equipment Opreator [38.55 h]; Excavator-Poclain [32.13 h]; Dump Truck [6.4 h]; GRP (800mm Diameter) - ST - Depth less than 1.5 m [19.7 m]; GRP (800mm Diameter) - ST - Depth: 1.51m - 2.5m [14.76 m]; GRP (800mm Diameter) - ST - Depth: 2.51m - 3.5m [29.52 m]; GRP (800mm Diameter) - ST - Depth: 3.51m - 4.5m [22.13 m] |
| RHD4CZ4A013ST1204 | Bedding works for GRP Pipe Line 800 mm - (RD-A-1 /3)-Z4-A013-ST | 2026-08-17 A | 2026-08-19 → 2026-09-01 A (+13d) | 0% → 100% |  |
| RHD4CZ4A013ST1304 | Installing for GRP Pipe Line 800 mm - (RD-A-1 /3)-Z4-A013-ST | 2026-08-20 A | 2026-08-22 → 2026-09-06 A (+15d) | 0% → 100% | resources Unskilled Labor [40.08 h]; Plumber [20.04 h]; GRP (800mm Diameter) - ST - Depth less than 1.5 m [88.67 m]; GRP (800mm Diameter) - ST - Depth: 1.51m - 2.5m [39.35 m]; GRP (800mm Diameter) - ST - Depth: 2.51m - 3.5m [78.73 m]; GRP (800mm Diameter) - ST - Depth: 3.51m - 4.5m [59 m] → Unskilled Labor [40.08 h]; Plumber [20 h]; GRP (800mm Diameter) - ST - Depth less than 1.5 m [88.67 m]; GRP (800mm Diameter) - ST - Depth: 1.51m - 2.5m [39.35 m]; GRP (800mm Diameter) - ST - Depth: 2.51m - 3.5m [78.73 m]; GRP (800mm Diameter) - ST - Depth: 3.51m - 4.5m [59 m] |
| RHD4CZ4A013ST1504 | Backfilling and warning tape works for GRP Pipe Line 800 mm - (RD-A-1 /3)-Z4-A013-ST | 2026-08-25 A | 2026-08-27 → 2026-09-08 A (+12d) | 0% → 100% |  |
| RHD4CZ4A013ST1404 | Primary Test for GRP Pipe Line 800 mm - (RD-A-1 /3)-Z4-A013-ST | 2026-08-23 → 2027-02-08 (+169d) | 2026-08-24 → 2027-02-09 (+169d) |  | resources Unskilled Labor [16.77 h]; Plumber [16.77 h]; Equipment Opreator [16.77 h]; Water Truck [16.77 h]; GRP (800mm Diameter) - ST - Depth less than 1.5 m [39.41 m]; GRP (800mm Diameter) - ST - Depth: 1.51m - 2.5m [19.68 m]; GRP (800mm Diameter) - ST - Depth: 2.51m - 3.5m [39.36 m]; GRP (800mm Diameter) - ST - Depth: 3.51m - 4.5m [29.5 m] → Unskilled Labor [16.8 h]; Plumber [16.8 h]; Equipment Opreator [16.8 h]; Water Truck [16.8 h]; GRP (800mm Diameter) - ST - Depth less than 1.5 m [39.41 m]; GRP (800mm Diameter) - ST - Depth: 1.51m - 2.5m [19.68 m]; GRP (800mm Diameter) - ST - Depth: 2.51m - 3.5m [39.36 m]; GRP (800mm Diameter) - ST - Depth: 3.51m - 4.5m [29.5 m] |
| 2414 | **RHD4-02-002-A013-(ST)-GRP Pipes - 600 mm diameter** | 2026-08-17 → 2026-08-18 (+1d) | 2026-08-27 → 2027-02-09 (+166d) |  |  |
| RHD4CZ4A013ST1102 | Excavation works for GRP Pipe Line 600 mm - (RD-A-1 /3)-Z4-A013-ST | 2026-08-17 → 2026-08-18 A (+1d) | 2026-08-18 → 2026-08-19 A (+1d) | 0% → 100% | resources Skilled labor [5.34 h]; Unskilled Labor [5.34 h]; Equipment Opreator [6.43 h]; Excavator-Poclain [5.34 h]; Dump Truck [1.09 h]; GRP (600mm Diameter) - ST - Depth less than 1.5 m [9.88 m]; GRP (600mm Diameter) - ST - Depth: 1.51m - 2.5m → Skilled labor [5.34 h]; Unskilled Labor [5.34 h]; Equipment Opreator [6.4 h]; Excavator-Poclain [5.34 h]; Dump Truck [1.09 h]; GRP (600mm Diameter) - ST - Depth less than 1.5 m [9.88 m]; GRP (600mm Diameter) - ST - Depth: 1.51m - 2.5m |
| RHD4CZ4A013ST1202 | Bedding works for GRP Pipe Line 600 mm - (RD-A-1 /3)-Z4-A013-ST | 2026-08-19 A | 2026-08-20 → 2026-09-06 A (+17d) | 0% → 100% |  |
| RHD4CZ4A013ST1302 | Installing for GRP Pipe Line 600 mm - (RD-A-1 /3)-Z4-A013-ST | 2026-08-22 A | 2026-08-23 → 2026-09-07 A (+15d) | 0% → 100% |  |
| RHD4CZ4A013ST1502 | Backfilling and warning tape works for GRP Pipe Line 600 mm - (RD-A-1 /3)-Z4-A013-ST | 2026-08-26 A | 2026-08-27 → 2026-09-09 A (+13d) | 0% → 100% |  |
| RHD4CZ4A013ST1402 | Primary Test for GRP Pipe Line 600 mm - (RD-A-1 /3)-Z4-A013-ST | 2026-08-24 → 2027-02-08 (+168d) | 2026-08-25 → 2027-02-09 (+168d) |  |  |
| 2412 | **RHD4-02-002-A013-(ST)-GRP Pipes - 400 mm diameter** |  | 2026-08-30 → 2027-02-16 (+170d) |  |  |
| RHD4CZ4A013ST1100 | Excavation works for GRP Pipe Line 400 mm - (RD-A-1 /3)-Z4-A013-ST | 2026-08-19 A | 2026-08-20 A | 0% → 100% |  |
| RHD4CZ4A013ST1200 | Bedding works for GRP Pipe Line 400 mm - (RD-A-1 /3)-Z4-A013-ST | 2026-08-22 → 2026-09-05 A (+14d) | 2026-08-23 → 2027-02-09 (+170d) | 0% → 80% |  |
| RHD4CZ4A013ST1300 | Installing for GRP Pipe Line 400 mm - (RD-A-1 /3)-Z4-A013-ST | 2026-08-24 → 2026-09-07 A (+14d) | 2026-08-25 → 2027-02-11 (+170d) | 0% → 80% |  |
| RHD4CZ4A013ST1500 | Backfilling and warning tape works for GRP Pipe Line 400 mm - (RD-A-1 /3)-Z4-A013-ST | 2026-08-29 → 2026-09-08 A (+10d) | 2026-08-30 → 2027-02-16 (+170d) | 0% → 80% | resources Skilled labor [13.61 h]; Unskilled Labor [27.33 h]; Equipment Opreator [27.33 h]; Excavator-Poclain [13.61 h]; Dump Truck [13.61 h]; GRP (400mm Diameter) - ST - Depth less than 1.5 m [50.14 m] → Skilled labor [13.6 h]; Unskilled Labor [27.33 h]; Equipment Opreator [27.33 h]; Excavator-Poclain [13.6 h]; Dump Truck [13.6 h]; GRP (400mm Diameter) - ST - Depth less than 1.5 m [50.14 m] |
| RHD4CZ4A013ST1400 | Primary Test for GRP Pipe Line 400 mm - (RD-A-1 /3)-Z4-A013-ST | 2026-08-26 → 2027-02-13 (+171d) | 2026-08-27 → 2027-02-14 (+171d) |  |  |
| 2413 | **RHD4-02-002-A013-(ST)-GRP Pipes - 500 mm diameter** | 2026-08-22 → 2026-08-08 (-14d) | 2026-09-01 → 2027-02-09 (+161d) |  |  |
| RHD4CZ4A013ST1101 | Excavation works for GRP Pipe Line 500 mm - (RD-A-1 /3)-Z4-A013-ST | 2026-08-22 → 2026-08-08 A (-14d) | 2026-08-23 → 2026-08-09 A (-14d) | 0% → 100% |  |
| RHD4CZ4A013ST1201 | Bedding works for GRP Pipe Line 500 mm - (RD-A-1 /3)-Z4-A013-ST | 2026-08-24 → 2026-08-10 A (-14d) | 2026-08-25 → 2026-08-11 A (-14d) | 0% → 100% | resources Skilled labor [3.59 h]; Unskilled Labor [7.19 h]; Equipment Opreator [7.19 h]; Excavator-Poclain [3.59 h]; Dump Truck [3.59 h]; GRP (500mm Diameter) - ST - Depth less than 1.5 m [4.93 m] → Skilled labor [3.59 h]; Unskilled Labor [7.2 h]; Equipment Opreator [7.2 h]; Excavator-Poclain [3.59 h]; Dump Truck [3.59 h]; GRP (500mm Diameter) - ST - Depth less than 1.5 m [4.93 m] |
| RHD4CZ4A013ST1301 | Installing for GRP Pipe Line 500 mm - (RD-A-1 /3)-Z4-A013-ST | 2026-08-26 → 2026-08-13 A (-13d) | 2026-08-27 → 2026-08-15 A (-12d) | 0% → 100% | resources Unskilled Labor [14.38 h]; Plumber [7.19 h]; GRP (500mm Diameter) - ST - Depth less than 1.5 m [44.4 m] → Unskilled Labor [14.4 h]; Plumber [7.2 h]; GRP (500mm Diameter) - ST - Depth less than 1.5 m [44.4 m] |
| RHD4CZ4A013ST1501 | Backfilling and warning tape works for GRP Pipe Line 500 mm - (RD-A-1 /3)-Z4-A013-ST | 2026-08-31 → 2026-08-17 A (-14d) | 2026-09-01 → 2026-08-18 A (-14d) | 0% → 100% |  |
| RHD4CZ4A013ST1401 | Primary Test for GRP Pipe Line 500 mm - (RD-A-1 /3)-Z4-A013-ST | 2026-08-29 → 2027-02-08 (+163d) | 2026-08-30 → 2027-02-09 (+163d) |  |  |
| 2997 | **RHD4-02-002-A013-(ST)-MH Works - 2000 mm diameter** | 2026-08-24 → 2026-08-06 (-18d) | 2026-09-26 → 2027-03-15 (+170d) |  |  |
| RHD4CZ4A013ST3102 | Excavation and PC Blinding works for MH 2000 mm - (RD-A-1 /3)-Z4-A013-ST | 2026-08-24 → 2026-08-06 A (-18d) | 2026-08-30 → 2026-09-04 A (+5d) | 0% → 100% |  |
| RHD4CZ4A013ST3202 | Installation of Base for MH 2000 mm - (RD-A-1 /3)-Z4-A013-ST | 2026-08-31 → 2026-09-19 A (+19d) | 2026-09-02 → 2027-02-10 (+161d) | 0% → 85% | resources Skilled labor [79.83 h]; Unskilled Labor [79.83 h]; Equipment Opreator [31.91 h]; Boom Truck [16.01 h]; Concrete Mixer Truck [16.01 h]; MH (2000mm Diameter) - ST - depth 1.50 - 2.5m [0.25 nr]; MH (2000mm Diameter) - ST - depth 2.51 - 3.5m [1.25 nr]; MH (2000mm Diameter) - ST - depth 3.51 -4.5m [1.75 nr]; MH (2000mm Diameter) - ST - depth 4.51 -5.5m [0.25 nr] → Skilled labor [79.83 h]; Unskilled Labor [79.83 h]; Equipment Opreator [31.91 h]; Boom Truck [16 h]; Concrete Mixer Truck [16 h]; MH (2000mm Diameter) - ST - depth 1.50 - 2.5m [0.25 nr]; MH (2000mm Diameter) - ST - depth 2.51 - 3.5m [1.25 nr]; MH (2000mm Diameter) - ST - depth 3.51 -4.5m [1.75 nr]; MH (2000mm Diameter) - ST - depth 4.51 -5.5m [0.25 nr] |
| RHD4CZ4A013ST3302 | MH Ring and C.Slab works and Backfilling works for MH 2000 mm - (RD-A-1 /3)-Z4-A013-ST | 2026-09-03 → 2027-02-17 (+167d) | 2026-09-12 → 2027-02-27 (+168d) |  |  |
| RHD4CZ4A013ST3402 | Steel Cover for MH 2000 mm - (RD-A-1 /3)-Z4-A013-ST | 2026-09-13 → 2027-02-28 (+168d) | 2026-09-17 → 2027-03-04 (+168d) |  | resources Skilled labor [50.86 h]; Unskilled Labor [101.61 h]; Equipment Opreator [10.13 h]; Boom Truck [10.13 h]; MH (2000mm Diameter) - ST - depth 1.50 - 2.5m [0.05 nr]; MH (2000mm Diameter) - ST - depth 2.51 - 3.5m [0.25 nr]; MH (2000mm Diameter) - ST - depth 3.51 -4.5m [0.35 nr]; MH (2000mm Diameter) - ST - depth 4.51 -5.5m [0.05 nr] → Skilled labor [50.86 h]; Unskilled Labor [101.6 h]; Equipment Opreator [10.13 h]; Boom Truck [10.13 h]; MH (2000mm Diameter) - ST - depth 1.50 - 2.5m [0.05 nr]; MH (2000mm Diameter) - ST - depth 2.51 - 3.5m [0.25 nr]; MH (2000mm Diameter) - ST - depth 3.51 -4.5m [0.35 nr]; MH (2000mm Diameter) - ST - depth 4.51 -5.5m [0.05 nr] |
| RHD4CZ4A013ST3502 | Finishing, Benching, Testing works for MH 2000 mm - (RD-A-1 /3)-Z4-A013-ST | 2026-09-19 → 2027-03-06 (+168d) | 2026-09-26 → 2027-03-15 (+170d) |  |  |
| 2996 | **RHD4-02-002-A013-(ST)-MH Works - 1500 mm diameter** | 2026-09-27 → 2026-09-05 (-22d) | 2026-10-24 → 2027-04-01 (+159d) |  |  |
| RHD4CZ4A013ST3101 | Excavation and PC Blinding works for MH 1500 mm - (RD-A-1 /3)-Z4-A013-ST | 2026-09-27 → 2026-09-05 A (-22d) | 2026-09-29 → 2026-09-18 A (-11d) | 0% → 100% |  |
| RHD4CZ4A013ST3201 | Installation of Base for MH 1500 mm - (RD-A-1 /3)-Z4-A013-ST | 2026-09-30 → 2026-09-06 A (-24d) | 2026-10-06 → 2026-09-21 A (-15d) | 0% → 100% |  |
| RHD4CZ4A013ST3301 | MH Ring and C.Slab works and Backfilling works for MH 1500 mm - (RD-A-1 /3)-Z4-A013-ST | 2026-10-07 → 2027-03-16 (+160d) | 2026-10-13 → 2027-03-22 (+160d) |  |  |
| RHD4CZ4A013ST3401 | Steel Cover for MH 1500 mm - (RD-A-1 /3)-Z4-A013-ST | 2026-10-14 → 2027-03-23 (+160d) | 2026-10-17 → 2027-03-25 (+159d) |  |  |
| RHD4CZ4A013ST3501 | Finishing, Benching, Testing works for MH 1500 mm - (RD-A-1 /3)-Z4-A013-ST | 2026-10-18 → 2027-03-27 (+160d) | 2026-10-24 → 2027-04-01 (+159d) |  |  |
| 2987 | **RHD4-02-002-A013-(ST)-GRP Pipes - 1200 mm diameter** | 2026-10-14 → 2026-08-04 (-71d) | 2026-11-03 → 2027-03-30 (+147d) |  |  |
| RHD4CZ4A013ST1108 | Excavation works for GRP Pipe Line 1200 mm - (RD-A-1 /3)-Z4-A013-ST | 2026-10-14 → 2026-08-04 A (-71d) | 2026-10-18 → 2026-09-05 A (-43d) | 0% → 100% | resources Skilled labor [43.23 h]; Unskilled Labor [43.23 h]; Equipment Opreator [51.95 h]; Excavator-Poclain [43.23 h]; Dump Truck [8.6 h]; GRP (1200mm Diameter) - ST - Depth: 2.51m - 3.5m [89.39 m]; GRP (1200mm Diameter) - ST - Depth: 3.51m - 4.5m → Skilled labor [43.2 h]; Unskilled Labor [43.2 h]; Equipment Opreator [51.95 h]; Excavator-Poclain [43.2 h]; Dump Truck [8.6 h]; GRP (1200mm Diameter) - ST - Depth: 2.51m - 3.5m [89.39 m]; GRP (1200mm Diameter) - ST - Depth: 3.51m - 4.5m |
| RHD4CZ4A013ST1208 | Bedding works for GRP Pipe Line 1200 mm - (RD-A-1 /3)-Z4-A013-ST | 2026-10-19 → 2026-08-09 A (-71d) | 2026-10-22 → 2026-09-06 A (-46d) | 0% → 100% | resources Skilled labor [43.23 h]; Unskilled Labor [86.58 h]; Equipment Opreator [86.58 h]; Excavator-Poclain [43.23 h]; Dump Truck [43.23 h]; GRP (1200mm Diameter) - ST - Depth: 2.51m - 3.5m [29.8 m]; GRP (1200mm Diameter) - ST - Depth: 3.51m - 4.5m → Skilled labor [43.2 h]; Unskilled Labor [86.58 h]; Equipment Opreator [86.58 h]; Excavator-Poclain [43.2 h]; Dump Truck [43.2 h]; GRP (1200mm Diameter) - ST - Depth: 2.51m - 3.5m [29.8 m]; GRP (1200mm Diameter) - ST - Depth: 3.51m - 4.5m |
| RHD4CZ4A013ST1308 | Installing for GRP Pipe Line 1200 mm - (RD-A-1 /3)-Z4-A013-ST | 2026-10-24 → 2026-08-13 A (-72d) | 2026-10-26 → 2026-09-08 A (-48d) | 0% → 100% |  |
| RHD4CZ4A013ST1508 | Backfilling and warning tape works for GRP Pipe Line 1200 mm - (RD-A-1 /3)-Z4-A013-ST | 2026-10-31 → 2026-08-15 A (-77d) | 2026-11-03 → 2027-03-30 (+147d) | 0% → 16% | resources Skilled labor [43.23 h]; Unskilled Labor [86.58 h]; Equipment Opreator [86.58 h]; Excavator-Poclain [43.23 h]; Dump Truck [43.23 h]; GRP (1200mm Diameter) - ST - Depth: 2.51m - 3.5m [119.19 m]; GRP (1200mm Diameter) - ST - Depth: 3.51m - 4.5m → Skilled labor [43.2 h]; Unskilled Labor [86.58 h]; Equipment Opreator [86.58 h]; Excavator-Poclain [43.2 h]; Dump Truck [43.2 h]; GRP (1200mm Diameter) - ST - Depth: 2.51m - 3.5m [119.19 m]; GRP (1200mm Diameter) - ST - Depth: 3.51m - 4.5m |
| RHD4CZ4A013ST1408 | Primary Test for GRP Pipe Line 1200 mm - (RD-A-1 /3)-Z4-A013-ST | 2026-10-27 → 2027-03-23 (+147d) | 2026-10-29 → 2027-03-25 (+147d) |  |  |
| 2986 | **RHD4-02-002-A013-(ST)-GRP Pipes - 1100 mm diameter** | 2026-11-04 → 2026-08-11 (-85d) | 2026-11-18 → 2027-04-07 (+140d) |  |  |
| RHD4CZ4A013ST1107 | Excavation works for GRP Pipe Line 1100 mm - (RD-A-1 /3)-Z4-A013-ST | 2026-11-04 → 2026-08-11 A (-85d) | 2026-11-07 → 2026-08-13 A (-86d) | 0% → 100% | resources Skilled labor [26.68 h]; Unskilled Labor [26.68 h]; Equipment Opreator [32.02 h]; Excavator-Poclain [26.68 h]; Dump Truck [5.34 h]; GRP (1100mm Diameter) - ST - Depth: 1.51m - 2.5m [14.59 m]; GRP (1100mm Diameter) - ST - Depth: 2.51m - 3.5m [29.88 m]; GRP (1100mm Diameter) - ST - Depth: 3.51m - 4.5m [29.32 m] → Skilled labor [26.68 h]; Unskilled Labor [26.68 h]; Equipment Opreator [32 h]; Excavator-Poclain [26.68 h]; Dump Truck [5.34 h]; GRP (1100mm Diameter) - ST - Depth: 1.51m - 2.5m [14.59 m]; GRP (1100mm Diameter) - ST - Depth: 2.51m - 3.5m [29.88 m]; GRP (1100mm Diameter) - ST - Depth: 3.51m - 4.5m [29.32 m] |
| RHD4CZ4A013ST1207 | Bedding works for GRP Pipe Line 1100 mm - (RD-A-1 /3)-Z4-A013-ST | 2026-11-08 → 2026-08-13 A (-87d) | 2026-11-10 → 2026-08-16 A (-86d) | 0% → 100% |  |
| RHD4CZ4A013ST1307 | Installing for GRP Pipe Line 1100 mm - (RD-A-1 /3)-Z4-A013-ST | 2026-11-11 → 2026-08-15 A (-88d) | 2026-11-12 → 2027-04-01 (+140d) | 0% → 80% |  |
| RHD4CZ4A013ST1407 | Primary Test for GRP Pipe Line 1100 mm - (RD-A-1 /3)-Z4-A013-ST | 2026-11-14 → 2027-04-03 (+140d) | 2026-11-15 → 2027-04-04 (+140d) |  |  |
| RHD4CZ4A013ST1507 | Backfilling and warning tape works for GRP Pipe Line 1100 mm - (RD-A-1 /3)-Z4-A013-ST | 2026-11-16 → 2027-04-05 (+140d) | 2026-11-18 → 2027-04-07 (+140d) |  |  |
| 2985 | **RHD4-02-002-A013-(ST)-GRP Pipes - 1000 mm diameter** | 2026-11-08 → 2027-03-31 (+143d) | 2026-11-22 → 2027-04-14 (+143d) |  |  |
| RHD4CZ4A013ST1106 | Excavation works for GRP Pipe Line 1000 mm - (RD-A-1 /3)-Z4-A013-ST | 2026-11-08 → 2027-03-31 (+143d) | 2026-11-10 → 2027-04-03 (+144d) |  |  |
| RHD4CZ4A013ST1206 | Bedding works for GRP Pipe Line 1000 mm - (RD-A-1 /3)-Z4-A013-ST | 2026-11-11 → 2027-04-04 (+144d) | 2026-11-14 → 2027-04-06 (+143d) |  |  |
| RHD4CZ4A013ST1306 | Installing for GRP Pipe Line 1000 mm - (RD-A-1 /3)-Z4-A013-ST | 2026-11-15 → 2027-04-07 (+143d) | 2026-11-16 → 2027-04-08 (+143d) |  |  |
| RHD4CZ4A013ST1406 | Primary Test for GRP Pipe Line 1000 mm - (RD-A-1 /3)-Z4-A013-ST | 2026-11-17 → 2027-04-10 (+144d) | 2026-11-18 → 2027-04-11 (+144d) |  |  |
| RHD4CZ4A013ST1506 | Backfilling and warning tape works for GRP Pipe Line 1000 mm - (RD-A-1 /3)-Z4-A013-ST | 2026-11-19 → 2027-04-12 (+144d) | 2026-11-22 → 2027-04-14 (+143d) |  |  |
| 2984 | **RHD4-02-002-A013-(ST)-GRP Pipes - 900 mm diameter** | 2026-11-11 → 2026-08-19 (-84d) | 2026-11-24 → 2027-04-13 (+140d) |  |  |
| RHD4CZ4A013ST1105 | Excavation works for GRP Pipe Line 900 mm - (RD-A-1 /3)-Z4-A013-ST | 2026-11-11 → 2026-08-19 A (-84d) | 2026-11-12 → 2026-08-20 A (-84d) | 0% → 100% |  |
| RHD4CZ4A013ST1205 | Bedding works for GRP Pipe Line 900 mm - (RD-A-1 /3)-Z4-A013-ST | 2026-11-14 → 2026-08-22 A (-84d) | 2026-11-15 → 2026-08-23 A (-84d) | 0% → 100% |  |
| RHD4CZ4A013ST1305 | Installing for GRP Pipe Line 900 mm - (RD-A-1 /3)-Z4-A013-ST | 2026-11-17 → 2026-08-24 A (-85d) | 2026-11-18 → 2026-09-05 A (-74d) | 0% → 100% |  |
| RHD4CZ4A013ST1505 | Backfilling and warning tape works for GRP Pipe Line 900 mm - (RD-A-1 /3)-Z4-A013-ST | 2026-11-23 → 2026-08-26 A (-89d) | 2026-11-24 → 2026-09-07 A (-78d) | 0% → 100% |  |
| RHD4CZ4A013ST1405 | Primary Test for GRP Pipe Line 900 mm - (RD-A-1 /3)-Z4-A013-ST | 2026-11-19 → 2027-04-12 (+144d) | 2026-11-21 → 2027-04-13 (+143d) |  |  |
| 2982 | **RHD4-02-002-A013-(ST)-GRP Pipes - 700 mm diameter** | 2026-11-14 → 2026-08-18 (-88d) | 2026-11-26 → 2027-04-15 (+140d) |  |  |
| RHD4CZ4A013ST1103 | Excavation works for GRP Pipe Line 700 mm - (RD-A-1 /3)-Z4-A013-ST | 2026-11-14 → 2026-08-18 A (-88d) | 2026-11-15 → 2026-08-19 A (-88d) | 0% → 100% |  |
| RHD4CZ4A013ST1203 | Bedding works for GRP Pipe Line 700 mm - (RD-A-1 /3)-Z4-A013-ST | 2026-11-16 → 2026-08-20 A (-88d) | 2026-11-17 → 2026-08-22 A (-87d) | 0% → 100% | resources Skilled labor [3.16 h]; Unskilled Labor [6.43 h]; Equipment Opreator [6.43 h]; Excavator-Poclain [3.16 h]; Dump Truck [3.16 h]; GRP (700mm Diameter) - ST - Depth less than 1.5 m [2.95 m]; GRP (700mm Diameter) - ST - Depth: 1.51m - 2.5m → Skilled labor [3.16 h]; Unskilled Labor [6.4 h]; Equipment Opreator [6.4 h]; Excavator-Poclain [3.16 h]; Dump Truck [3.16 h]; GRP (700mm Diameter) - ST - Depth less than 1.5 m [2.95 m]; GRP (700mm Diameter) - ST - Depth: 1.51m - 2.5m |
| RHD4CZ4A013ST1303 | Installing for GRP Pipe Line 700 mm - (RD-A-1 /3)-Z4-A013-ST | 2026-11-19 → 2026-08-23 A (-88d) | 2026-11-21 → 2026-08-24 A (-89d) | 0% → 100% | resources Unskilled Labor [3.16 h]; Plumber [1.63 h]; GRP (700mm Diameter) - ST - Depth less than 1.5 m [26.51 m]; GRP (700mm Diameter) - ST - Depth: 1.51m - 2.5m → Unskilled Labor [3.16 h]; Plumber [1.6 h]; GRP (700mm Diameter) - ST - Depth less than 1.5 m [26.51 m]; GRP (700mm Diameter) - ST - Depth: 1.51m - 2.5m |
| RHD4CZ4A013ST1503 | Backfilling and warning tape works for GRP Pipe Line 700 mm - (RD-A-1 /3)-Z4-A013-ST | 2026-11-25 → 2026-09-05 A (-81d) | 2026-11-26 → 2026-09-06 A (-81d) | 0% → 100% | resources Skilled labor [3.16 h]; Unskilled Labor [6.43 h]; Equipment Opreator [6.43 h]; Excavator-Poclain [3.16 h]; Dump Truck [3.16 h]; GRP (700mm Diameter) - ST - Depth less than 1.5 m [11.78 m]; GRP (700mm Diameter) - ST - Depth: 1.51m - 2.5m → Skilled labor [3.16 h]; Unskilled Labor [6.4 h]; Equipment Opreator [6.4 h]; Excavator-Poclain [3.16 h]; Dump Truck [3.16 h]; GRP (700mm Diameter) - ST - Depth less than 1.5 m [11.78 m]; GRP (700mm Diameter) - ST - Depth: 1.51m - 2.5m |
| RHD4CZ4A013ST1403 | Primary Test for GRP Pipe Line 700 mm - (RD-A-1 /3)-Z4-A013-ST | 2026-11-22 → 2027-04-14 (+143d) | 2026-11-23 → 2027-04-15 (+143d) |  | resources Unskilled Labor [1.63 h]; Plumber [1.63 h]; Equipment Opreator [1.63 h]; Water Truck [1.63 h]; GRP (700mm Diameter) - ST - Depth less than 1.5 m [11.78 m]; GRP (700mm Diameter) - ST - Depth: 1.51m - 2.5m → Unskilled Labor [1.6 h]; Plumber [1.6 h]; Equipment Opreator [1.6 h]; Water Truck [1.6 h]; GRP (700mm Diameter) - ST - Depth less than 1.5 m [11.78 m]; GRP (700mm Diameter) - ST - Depth: 1.51m - 2.5m |
| 2993 | **RHD4-02-002-A013-(ST)-UPVC Pipes - 300 mm diameter** | 2026-11-16 → 2026-08-04 (-104d) | 2026-12-28 → 2027-04-28 (+121d) |  |  |

| ID | Task | Start | Finish | Complete | Other |
| --- | --- | --- | --- | --- | --- |
| RHD4CZ4A013ST2100 | Excavation works for UPVC Pipe Line 300 mm - (RD-A-1 /3)-Z4-A013-ST | 2026-11-16 → 2026-08-04 A (-104d) | 2026-11-24 → 2026-09-05 A (-80d) | 0% → 100% |  |
| RHD4CZ4A013ST2200 | Bedding works for UPVC Pipe Line 300 mm - (RD-A-1 /3)-Z4-A013-ST | 2026-11-25 → 2026-08-06 A (-111d) | 2026-12-02 → 2026-09-07 A (-86d) | 0% → 100% |  |
| RHD4CZ4A013ST2300 | Installing for UPVC Pipe Line 300 mm - (RD-A-1 /3)-Z4-A013-ST | 2026-12-03 → 2026-08-10 A (-115d) | 2026-12-12 → 2027-04-12 (+121d) | 0% → 72% |  |
| RHD4CZ4A013ST2500 | Backfilling and warning tape works for UPVC Pipe Line 300 mm - (RD-A-1 /3)-Z4-A013-ST | 2026-12-19 → 2026-09-19 A (-91d) | 2026-12-28 → 2027-04-28 (+121d) | 0% → 58% |  |
| RHD4CZ4A013ST2400 | Primary Test for UPVC Pipe Line 300 mm - (RD-A-1 /3)-Z4-A013-ST | 2026-12-13 → 2027-04-13 (+121d) | 2026-12-17 → 2027-04-18 (+122d) |  |  |
| 3001 | **RHD4-02-002-A013-(ST)-Concrete Encasement** | 2026-12-10 → 2026-09-05 (-96d) | 2026-12-12 → 2027-04-12 (+121d) |  |  |
| RHD4CZ4A013ST6100 | Pipe Encasement for Storm Pipelines - (RD-A-1 /3)-Z4-A013-ST | 2026-12-10 → 2026-09-05 A (-96d) | 2026-12-12 → 2027-04-12 (+121d) | 0% → 50% |  |
| 3002 | **RHD4-02-002-Z4-A013-Catch Basin - ST** | 2026-08-31 → 2026-08-04 (-27d) | 2026-10-25 → 2027-04-03 (+160d) |  |  |
| 3003 | **RHD4-02-002-A013-(ST)-Single Catch Basin Works** | 2026-08-31 → 2026-08-04 (-27d) | 2026-10-21 → 2027-03-13 (+143d) |  |  |
| RHD4CZ4A013ST7100 | Excavation works for Single Catch Basin - (RD-A-1 /3)-Z4-A013-ST | 2026-08-31 → 2026-08-04 A (-27d) | 2026-09-07 → 2026-08-29 A (-9d) | 0% → 100% |  |
| RHD4CZ4A013ST7200 | PC Blinding, Installation and Pipe connection for Single Catch Basin - (RD-A-1 /3)-Z4-A013-ST | 2026-09-08 → 2026-08-30 A (-9d) | 2026-09-15 → 2026-09-05 A (-10d) | 0% → 100% |  |
| RHD4CZ4A013ST7300 | Rings & C.Slab & Final Backfill for Single Catch Basin - (RD-A-1 /3)-Z4-A013-ST | 2026-09-16 → 2026-09-06 A (-10d) | 2026-09-27 → 2027-02-11 (+137d) | 0% → 90% | resources Skilled labor [91.26 h]; Unskilled Labor [182.41 h]; Equipment Opreator [109.45 h]; Boom Truck [18.3 h]; Bobcat [91.26 h]; Single Catch basin - ST [23.45 nr] → Skilled labor [91.26 h]; Unskilled Labor [182.4 h]; Equipment Opreator [109.45 h]; Boom Truck [18.3 h]; Bobcat [91.26 h]; Single Catch basin - ST [23.45 nr] |
| RHD4CZ4A013ST7400 | Steel Cover for Single Catch Basin - (RD-A-1 /3)-Z4-A013-ST | 2026-09-28 → 2027-02-13 (+138d) | 2026-10-05 → 2027-02-20 (+138d) |  |  |
| RHD4CZ4A013ST7500 | Finishing and Insulation works for Single Catch Basin - (RD-A-1 /3)-Z4-A013-ST | 2026-10-06 → 2027-02-21 (+138d) | 2026-10-21 → 2027-03-13 (+143d) |  |  |
| 3004 | **RHD4-02-002-A013-(ST)-Double Catch Basin Works** | 2026-10-14 → 2026-08-29 (-46d) | 2026-10-25 → 2027-04-03 (+160d) |  |  |
| RHD4CZ4A013ST8100 | Excavation works for Double Catch Basin - (RD-A-1 /3)-Z4-A013-ST | 2026-10-14 → 2026-08-29 A (-46d) | 2026-10-15 → 2026-08-30 A (-46d) | 0% → 100% |  |
| RHD4CZ4A013ST8200 | PC Blinding, Installation and Pipe connection for Double Catch Basin - (RD-A-1 /3)-Z4-A013-ST | 2026-10-17 → 2026-08-31 A (-47d) | 2026-10-18 → 2026-09-05 A (-43d) | 0% → 100% |  |
| RHD4CZ4A013ST8300 | Rings & C.Slab & Final Backfillfor Double Catch Basin - (RD-A-1 /3)-Z4-A013-ST | 2026-10-19 → 2026-09-07 A (-42d) | 2026-10-20 → 2027-03-29 (+160d) | 0% → 50% |  |
| RHD4CZ4A013ST8400 | Steel Cover for Double Catch Basin - (RD-A-1 /3)-Z4-A013-ST | 2026-10-21 → 2027-03-30 (+160d) | 2026-10-22 → 2027-03-31 (+160d) |  |  |
| RHD4CZ4A013ST8500 | Finishing and Insulation works for Double Catch Basin - (RD-A-1 /3)-Z4-A013-ST | 2026-10-24 → 2027-04-01 (+159d) | 2026-10-25 → 2027-04-03 (+160d) |  |  |
| 3064 | **RHD4-02-002-Z4-A013-Potable Network - PT** | 2026-11-16 → 2027-04-04 (+139d) | 2027-01-06 → 2027-05-30 (+144d) |  |  |
| 3068 | **RHD4-02-002-A013-(PT)-HDPE Pipes - 400 mm diameter** | 2026-11-16 → 2027-04-04 (+139d) | 2026-12-26 → 2027-05-13 (+138d) |  |  |
| RHD4CZ4A013PT1103 | Excavation works for HDPE Pipline 400 mm - (RD-A-1 /3)-Z4-A013-PT | 2026-11-16 → 2027-04-04 (+139d) | 2026-11-23 → 2027-04-11 (+139d) |  | resources Skilled labor [72.2 h]; Unskilled Labor [90.83 h]; Equipment Opreator [101.61 h]; Excavator-Poclain [72.2 h]; Dump Truck [29.4 h]; HDPE (400mm Diameter) - PT - Depth: less than 1.5m [123.23 m]; HDPE (400mm Diameter) - PT - Depth: 1.51m - 2.5m [3.39 m]; HDPE (400mm Diameter) - PT - Depth: more than 2.5m → Skilled labor [72.2 h]; Unskilled Labor [90.83 h]; Equipment Opreator [101.6 h]; Excavator-Poclain [72.2 h]; Dump Truck [29.4 h]; HDPE (400mm Diameter) - PT - Depth: less than 1.5m [123.23 m]; HDPE (400mm Diameter) - PT - Depth: 1.51m - 2.5m [3.39 m]; HDPE (400mm Diameter) - PT - Depth: more than 2.5m |
| RHD4CZ4A013PT1203 | Bedding works for HDPE Pipline 400 mm - (RD-A-1 /3)-Z4-A013-PT | 2026-11-24 → 2027-04-12 (+139d) | 2026-12-01 → 2027-04-19 (+139d) |  |  |
| RHD4CZ4A013PT1303 | Installing for HDPE Pipline 400 mm - (RD-A-1 /3)-Z4-A013-PT | 2026-12-02 → 2027-04-20 (+139d) | 2026-12-12 → 2027-04-29 (+138d) |  | resources Unskilled Labor [170.11 h]; Plumber [94.42 h]; Equipment Opreator [94.42 h]; Boom Truck [75.69 h]; Water Truck [18.73 h]; HDPE (400mm Diameter) - PT - Depth: less than 1.5m [554.53 m]; HDPE (400mm Diameter) - PT - Depth: 1.51m - 2.5m [13.54 m]; HDPE (400mm Diameter) - PT - Depth: more than 2.5m → Unskilled Labor [170.11 h]; Plumber [94.4 h]; Equipment Opreator [94.4 h]; Boom Truck [75.69 h]; Water Truck [18.73 h]; HDPE (400mm Diameter) - PT - Depth: less than 1.5m [554.53 m]; HDPE (400mm Diameter) - PT - Depth: 1.51m - 2.5m [13.54 m]; HDPE (400mm Diameter) - PT - Depth: more than 2.5m |
| RHD4CZ4A013PT1403 | Primary Test for HDPE Pipline 400 mm - (RD-A-1 /3)-Z4-A013-PT | 2026-12-13 → 2027-05-01 (+139d) | 2026-12-19 → 2027-05-06 (+138d) |  | resources Skilled labor [18.73 h]; Unskilled Labor [74.16 h]; Plumber [36.81 h]; Equipment Opreator [74.16 h]; Excavator-Poclain [18.73 h]; Water Truck [36.81 h]; Dump Truck [18.73 h]; HDPE (400mm Diameter) - PT - Depth: less than 1.5m [246.46 m]; HDPE (400mm Diameter) - PT - Depth: 1.51m - 2.5m [13.54 m]; HDPE (400mm Diameter) - PT - Depth: more than 2.5m → Skilled labor [18.73 h]; Unskilled Labor [74.16 h]; Plumber [36.8 h]; Equipment Opreator [74.16 h]; Excavator-Poclain [18.73 h]; Water Truck [36.8 h]; Dump Truck [18.73 h]; HDPE (400mm Diameter) - PT - Depth: less than 1.5m [246.46 m]; HDPE (400mm Diameter) - PT - Depth: 1.51m - 2.5m [13.54 m]; HDPE (400mm Diameter) - PT - Depth: more than 2.5m |
| RHD4CZ4A013PT1503 | Backfilling and warning tape works for HDPE Pipline 400 mm - (RD-A-1 /3)-Z4-A013-PT | 2026-12-20 → 2027-05-08 (+139d) | 2026-12-26 → 2027-05-13 (+138d) |  |  |
| 3071 | **RHD4-02-002-A013-(PT)-Butterfly Valve Chamber** | 2026-11-24 → 2027-04-12 (+139d) | 2026-12-28 → 2027-05-20 (+143d) |  |  |
| RHD4CZ4A013PT2100 | Excavation and Bedding for Butterfly Valve Chamber for Potable Water Network - (RD-A-1 /3)-Z4-A013-PT | 2026-11-24 → 2027-04-12 (+139d) | 2026-11-25 → 2027-04-13 (+139d) |  |  |
| RHD4CZ4A013PT2200 | PC works for Butterfly Valve Chamber for Potable Water Network - (RD-A-1 /3)-Z4-A013-PT | 2026-11-26 → 2027-04-14 (+139d) | 2026-11-28 → 2027-04-15 (+138d) |  |  |
| RHD4CZ4A013PT2300 | Installation for Butterfly Valve Chamber for Potable Water Network - (RD-A-1 /3)-Z4-A013-PT | 2026-11-29 → 2027-04-17 (+139d) | 2026-11-30 → 2027-04-18 (+139d) |  |  |
| RHD4CZ4A013PT2400 | Backfilling works for Butterfly Valve Chamber for Potable Water Network - (RD-A-1 /3)-Z4-A013-PT | 2026-12-27 → 2027-05-19 (+143d) | 2026-12-28 → 2027-05-20 (+143d) |  |  |
| 3072 | **RHD4-02-002-A013-(PT)-Butterfly Valves** | 2026-12-01 → 2027-04-19 (+139d) | 2026-12-30 → 2027-05-23 (+144d) |  |  |
| RHD4CZ4A013PT3101 | Installation for Butterfly Valves for Potable Water Network - (RD-A-1 /3)-Z4-A013-PT | 2026-12-01 → 2027-04-19 (+139d) | 2026-12-02 → 2027-04-20 (+139d) |  |  |
| RHD4CZ4A013PT3201 | Stem and Service box for Butterfly Valves for Potable Water Network - (RD-A-1 /3)-Z4-A013-PT | 2026-12-29 → 2027-05-22 (+144d) | 2026-12-30 → 2027-05-23 (+144d) |  |  |
| 3073 | **RHD4-02-002-A013-(PT)-Wash out Valve Chambers** | 2026-11-24 → 2027-04-12 (+139d) | 2026-12-02 → 2027-04-20 (+139d) |  |  |
| RHD4CZ4A013PT2101 | Excavation and Bedding for Wash out Valve Chambers for Potable Water Network - (RD-A-1 /3)-Z4-A013-PT | 2026-11-24 → 2027-04-12 (+139d) | 2026-11-25 → 2027-04-13 (+139d) |  |  |
| RHD4CZ4A013PT2201 | PC works for Wash out Valve Chambers for Potable Water Network - (RD-A-1 /3)-Z4-A013-PT | 2026-11-26 → 2027-04-14 (+139d) | 2026-11-28 → 2027-04-15 (+138d) |  |  |
| RHD4CZ4A013PT2301 | Installation for Wash out Valve Chambers for Potable Water Network - (RD-A-1 /3)-Z4-A013-PT | 2026-11-29 → 2027-04-17 (+139d) | 2026-11-30 → 2027-04-18 (+139d) |  |  |
| RHD4CZ4A013PT2401 | Backfilling works for Wash out Valve Chambers for Potable Water Network - (RD-A-1 /3)-Z4-A013-PT | 2026-12-01 → 2027-04-19 (+139d) | 2026-12-02 → 2027-04-20 (+139d) |  |  |
| 3074 | **RHD4-02-002-A013-(PT)-Wash out Valves** | 2026-12-01 → 2027-04-19 (+139d) | 2026-12-05 → 2027-04-22 (+138d) |  |  |
| RHD4CZ4A013PT3102 | Installation for Wash out Valves for Potable Water Network - (RD-A-1 /3)-Z4-A013-PT | 2026-12-01 → 2027-04-19 (+139d) | 2026-12-02 → 2027-04-20 (+139d) |  |  |
| RHD4CZ4A013PT3202 | Stem and Service box for Wash out Valves for Potable Water Network - (RD-A-1 /3)-Z4-A013-PT | 2026-12-03 → 2027-04-21 (+139d) | 2026-12-05 → 2027-04-22 (+138d) |  |  |
| 3075 | **RHD4-02-002-A013-(PT)-Air Valve Chambers** | 2026-11-24 → 2027-04-12 (+139d) | 2026-12-02 → 2027-04-20 (+139d) |  |  |
| RHD4CZ4A013PT2102 | Excavation and Bedding for Air Valve Chambers for Potable Water Network - (RD-A-1 /3)-Z4-A013-PT | 2026-11-24 → 2027-04-12 (+139d) | 2026-11-25 → 2027-04-13 (+139d) |  |  |
| RHD4CZ4A013PT2202 | PC works for Air Valve Chambers for Potable Water Network - (RD-A-1 /3)-Z4-A013-PT | 2026-11-26 → 2027-04-14 (+139d) | 2026-11-28 → 2027-04-15 (+138d) |  |  |
| RHD4CZ4A013PT2302 | Installation for Air Valve Chambers for Potable Water Network - (RD-A-1 /3)-Z4-A013-PT | 2026-11-29 → 2027-04-17 (+139d) | 2026-11-30 → 2027-04-18 (+139d) |  |  |
| RHD4CZ4A013PT2402 | Backfilling works for Air Valve Chambers for Potable Water Network - (RD-A-1 /3)-Z4-A013-PT | 2026-12-01 → 2027-04-19 (+139d) | 2026-12-02 → 2027-04-20 (+139d) |  |  |
| 3076 | **RHD4-02-002-A013-(PT)-Air Valves** | 2026-12-01 → 2027-04-19 (+139d) | 2026-12-05 → 2027-04-22 (+138d) |  |  |
| RHD4CZ4A013PT3103 | Installation for Air Valves for Potable Water Network - (RD-A-1 /3)-Z4-A013-PT | 2026-12-01 → 2027-04-19 (+139d) | 2026-12-02 → 2027-04-20 (+139d) |  |  |
| RHD4CZ4A013PT3203 | Stem and Service box for Air Valves for Potable Water Network - (RD-A-1 /3)-Z4-A013-PT | 2026-12-03 → 2027-04-21 (+139d) | 2026-12-05 → 2027-04-22 (+138d) |  |  |
| 3077 | **RHD4-02-002-A013-(PT)-Fire Hydrant** | 2026-12-20 → 2027-05-08 (+139d) | 2027-01-06 → 2027-05-30 (+144d) |  |  |
| RHD4CZ4A013PT4100 | Excavation and Bedding and Pipe Installation for Fire Hydrant - (RD-A-1 /3)-Z4-A013-PT | 2026-12-20 → 2027-05-08 (+139d) | 2026-12-24 → 2027-05-12 (+139d) |  |  |
| RHD4CZ4A013PT4200 | Valve Installation for Fire Hydrant - (RD-A-1 /3)-Z4-A013-PT | 2026-12-26 → 2027-05-13 (+138d) | 2026-12-28 → 2027-05-20 (+143d) |  |  |
| RHD4CZ4A013PT4300 | Stem for Fire Hydrant - (RD-A-1 /3)-Z4-A013-PT | 2026-12-29 → 2027-05-22 (+144d) | 2026-12-31 → 2027-05-24 (+144d) |  |  |
| RHD4CZ4A013PT4400 | Fire Installation for Fire Hydrant - (RD-A-1 /3)-Z4-A013-PT | 2027-01-02 → 2027-05-25 (+143d) | 2027-01-04 → 2027-05-27 (+143d) |  |  |
| RHD4CZ4A013PT4500 | Protection Barriers for Fire Hydrant - (RD-A-1 /3)-Z4-A013-PT | 2027-01-05 → 2027-05-29 (+144d) | 2027-01-06 → 2027-05-30 (+144d) |  |  |
| 3079 | **RHD4-02-002-Z4-A013-Irrigation Network - IRR** | 2026-11-24 → 2027-04-12 (+139d) | 2027-01-24 → 2027-06-16 (+143d) |  |  |
| 3083 | **RHD4-02-002-A013-(IRR)-HDPE Pipes - 250 mm diameter** | 2026-11-24 → 2027-04-12 (+139d) | 2027-01-07 → 2027-05-31 (+144d) |  |  |
| RHD4CZ4A013IRR1103 | Excavation works for HDPE Pipline 250 mm - (RD-A-1 /3)-Z4-A013-IRR | 2026-11-24 → 2027-04-12 (+139d) | 2026-12-05 → 2027-04-22 (+138d) |  | resources Skilled labor [101.61 h]; Unskilled Labor [101.61 h]; Equipment Opreator [121.97 h]; Excavator-Poclain [101.61 h]; Dump Truck [20.36 h]; HDPE (250mm Diameter) - TSE - Depth: less than 1.5m [132.51 m]; HDPE (250mm Diameter) - TSE - Depth: more than 1.51m [11.24 m] → Skilled labor [101.6 h]; Unskilled Labor [101.6 h]; Equipment Opreator [121.97 h]; Excavator-Poclain [101.6 h]; Dump Truck [20.36 h]; HDPE (250mm Diameter) - TSE - Depth: less than 1.5m [132.51 m]; HDPE (250mm Diameter) - TSE - Depth: more than 1.51m [11.24 m] |
| RHD4CZ4A013IRR1203 | Bedding works for HDPE Pipline 250 mm - (RD-A-1 /3)-Z4-A013-IRR | 2026-12-06 → 2027-04-24 (+139d) | 2026-12-14 → 2027-05-02 (+139d) |  | resources Skilled labor [77.65 h]; Unskilled Labor [155.19 h]; Equipment Opreator [155.19 h]; Excavator-Poclain [77.65 h]; Dump Truck [77.65 h]; HDPE (250mm Diameter) - TSE - Depth: less than 1.5m [66.26 m]; HDPE (250mm Diameter) - TSE - Depth: more than 1.51m [3.75 m] → Skilled labor [77.65 h]; Unskilled Labor [155.2 h]; Equipment Opreator [155.2 h]; Excavator-Poclain [77.65 h]; Dump Truck [77.65 h]; HDPE (250mm Diameter) - TSE - Depth: less than 1.5m [66.26 m]; HDPE (250mm Diameter) - TSE - Depth: more than 1.51m [3.75 m] |
| RHD4CZ4A013IRR1303 | Installing for HDPE Pipline 250 mm - (RD-A-1 /3)-Z4-A013-IRR | 2026-12-15 → 2027-05-03 (+139d) | 2026-12-26 → 2027-05-13 (+138d) |  | resources Unskilled Labor [203.32 h]; Plumber [101.61 h]; Equipment Opreator [101.61 h]; Boom Truck [101.61 h]; HDPE (250mm Diameter) - TSE - Depth: less than 1.5m [596.31 m]; HDPE (250mm Diameter) - TSE - Depth: more than 1.51m [29.96 m] → Unskilled Labor [203.32 h]; Plumber [101.6 h]; Equipment Opreator [101.6 h]; Boom Truck [101.6 h]; HDPE (250mm Diameter) - TSE - Depth: less than 1.5m [596.31 m]; HDPE (250mm Diameter) - TSE - Depth: more than 1.51m [29.96 m] |
| RHD4CZ4A013IRR1403 | Primary Test for HDPE Pipline 250 mm - (RD-A-1 /3)-Z4-A013-IRR | 2026-12-27 → 2027-05-19 (+143d) | 2026-12-29 → 2027-05-22 (+144d) |  |  |
| RHD4CZ4A013IRR1503 | Backfilling and warning tape works for HDPE Pipline 250 mm - (RD-A-1 /3)-Z4-A013-IRR | 2026-12-30 → 2027-05-23 (+144d) | 2027-01-07 → 2027-05-31 (+144d) |  | resources Skilled labor [77.65 h]; Unskilled Labor [155.19 h]; Equipment Opreator [155.19 h]; Excavator-Poclain [77.65 h]; Dump Truck [77.65 h]; HDPE (250mm Diameter) - TSE - Depth: less than 1.5m [265.03 m]; HDPE (250mm Diameter) - TSE - Depth: more than 1.51m [14.98 m] → Skilled labor [77.65 h]; Unskilled Labor [155.2 h]; Equipment Opreator [155.2 h]; Excavator-Poclain [77.65 h]; Dump Truck [77.65 h]; HDPE (250mm Diameter) - TSE - Depth: less than 1.5m [265.03 m]; HDPE (250mm Diameter) - TSE - Depth: more than 1.51m [14.98 m] |
| 1770 | **RHD4-02-002-A013-(IRR)-Air Valves** | 2026-12-27 → 2027-05-19 (+143d) | 2026-12-30 → 2027-05-23 (+144d) |  |  |
| RHD4CZ4A013IRR3103 | Installation for Air Valves for Irrigation Network - (RD-A-1 /3)-Z4-A013-IRR | 2026-12-27 → 2027-05-19 (+143d) | 2026-12-28 → 2027-05-20 (+143d) |  |  |
| RHD4CZ4A013IRR3203 | Stem and Service box for Air Valves for Irrigation Network - (RD-A-1 /3)-Z4-A013-IRR | 2026-12-29 → 2027-05-22 (+144d) | 2026-12-30 → 2027-05-23 (+144d) |  |  |
| 6107 | **RHD4-02-002-A013-(IRR)-HDPE Pipes - 160 mm diameter** | 2027-01-09 → 2027-06-01 (+143d) | 2027-01-19 → 2027-06-12 (+144d) |  |  |
| RHD4CZ4A013IRR1100 | Excavation works for HDPE Pipline 160 mm - (RD-A-1 /3)-Z4-A013-IRR | 2027-01-09 → 2027-06-01 (+143d) | 2027-01-10 → 2027-06-02 (+143d) |  |  |
| RHD4CZ4A013IRR1200 | Bedding works for HDPE Pipline 160 mm - (RD-A-1 /3)-Z4-A013-IRR | 2027-01-11 → 2027-06-03 (+143d) | 2027-01-12 → 2027-06-05 (+144d) |  |  |

| ID | Task | Start | Finish | Other |
| --- | --- | --- | --- | --- |
| RHD4CZ4A013IRR1300 | Installing for HDPE Pipline 160 mm - (RD-A-1 /3)-Z4-A013-IRR | 2027-01-13 → 2027-06-06 (+144d) | 2027-01-14 → 2027-06-07 (+144d) |  |
| RHD4CZ4A013IRR1400 | Primary Test for HDPE Pipline 160 mm - (RD-A-1 /3)-Z4-A013-IRR | 2027-01-16 → 2027-06-08 (+143d) | 2027-01-17 → 2027-06-09 (+143d) |  |
| RHD4CZ4A013IRR1500 | Backfilling and warning tape works for HDPE Pipline 160 mm - (RD-A-1 /3)-Z4-A013-IRR | 2027-01-18 → 2027-06-10 (+143d) | 2027-01-19 → 2027-06-12 (+144d) |  |
| 6115 | **RHD4-02-002-A013-(IRR)-Gate Valves (Direct Buried)** | 2027-01-13 → 2027-06-06 (+144d) | 2027-01-24 → 2027-06-16 (+143d) |  |
| RHD4CZ4A013IRR3100 | Installation for Direct Buried Gate Valves - (RD-A-1 /3)-Z4-A013-IRR | 2027-01-13 → 2027-06-06 (+144d) | 2027-01-17 → 2027-06-09 (+143d) |  |
| RHD4CZ4A013IRR3200 | Stem and Service box for Direct Buried Gate Valves - (RD-A-1 /3)-Z4-A013-IRR | 2027-01-20 → 2027-06-13 (+144d) | 2027-01-24 → 2027-06-16 (+143d) |  |
| 1769 | **RHD4-02-002-A013-(IRR)-Air Valve Chamber** | 2026-12-06 → 2027-04-24 (+139d) | 2026-12-14 → 2027-05-02 (+139d) |  |
| RHD4CZ4A013IRR2102 | Excavation and Bedding for Valve Chamber for Irrigation Network - (RD-A-1 /3)-Z4-A013-IRR | 2026-12-06 → 2027-04-24 (+139d) | 2026-12-07 → 2027-04-25 (+139d) |  |
| RHD4CZ4A013IRR2202 | PC works for Valve Chamber for Irrigation Network - (RD-A-1 /3)-Z4-A013-IRR | 2026-12-08 → 2027-04-26 (+139d) | 2026-12-09 → 2027-04-27 (+139d) |  |
| RHD4CZ4A013IRR2302 | Installation for Valve Chamber for Irrigation Network - (RD-A-1 /3)-Z4-A013-IRR | 2026-12-10 → 2027-04-28 (+139d) | 2026-12-12 → 2027-04-29 (+138d) |  |
| RHD4CZ4A013IRR2402 | Backfilling works for Valve Chamber for Irrigation Network - (RD-A-1 /3)-Z4-A013-IRR | 2026-12-13 → 2027-05-01 (+139d) | 2026-12-14 → 2027-05-02 (+139d) |  |
| 3113 | **RHD4-02-002-Z4-A013-Medium Voltage Network - MV** | 2026-08-23 → 2027-02-13 (+174d) | 2027-04-29 → 2027-10-19 (+173d) |  |
| 3115 | **RHD4-02-002-A013-(MV)-Medium Voltage duct banks** | 2026-08-23 → 2027-02-13 (+174d) | 2026-09-07 → 2027-03-01 (+175d) |  |
| RHD4CZ4A013MV2100 | Excavation of Duct Banks for Medium Voltage Network - (RD-A-1 /3)-Z4-A013-MV | 2026-08-23 → 2027-02-13 (+174d) | 2026-08-25 → 2027-02-15 (+174d) |  |
| RHD4CZ4A013MV2200 | Installation of Duct Banks for Medium Voltage Network - (RD-A-1 /3)-Z4-A013-MV | 2026-08-26 → 2027-02-16 (+174d) | 2026-08-31 → 2027-02-21 (+174d) |  |
| RHD4CZ4A013MV2300 | Pouring of Duct Banks for Medium Voltage Network - (RD-A-1 /3)-Z4-A013-MV | 2026-09-01 → 2027-02-23 (+175d) | 2026-09-03 → 2027-02-25 (+175d) |  |
| RHD4CZ4A013MV2400 | Backfilling of Duct Banks for Medium Voltage Network - (RD-A-1 /3)-Z4-A013-MV | 2026-09-05 → 2027-02-27 (+175d) | 2026-09-07 → 2027-03-01 (+175d) |  |
| 3114 | **RHD4-02-002-A013-(MV)-Medium Voltage cable trench** | 2027-02-28 → 2027-08-22 (+175d) | 2027-03-18 → 2027-09-06 (+172d) |  |
| RHD4CZ4A013MV1100 | Excavation for Medium Voltage Trench - (RD-A-1 /3)-Z4-A013-MV | 2027-02-28 → 2027-08-22 (+175d) | 2027-03-07 → 2027-08-29 (+175d) |  |
| RHD4CZ4A013MV1200 | Trench Backfilling for Medium Voltage Network - (RD-A-1 /3)-Z4-A013-MV | 2027-03-08 → 2027-08-30 (+175d) | 2027-03-18 → 2027-09-06 (+172d) |  |
| 3116 | **RHD4-02-002-A013-(MV)-Medium Voltage cables 3Cx 500 mm²** | 2027-03-08 → 2027-08-30 (+175d) | 2027-04-27 → 2027-10-17 (+173d) |  |
| RHD4CZ4A013MV3100 | Installation of Medium Voltage Cables 3Cx 500 mm² - (RD-A-1 /3)-Z4-A013-MV | 2027-03-08 → 2027-08-30 (+175d) | 2027-03-30 → 2027-09-18 (+172d) |  |
| RHD4CZ4A013MV3200 | Joints Installation of Medium Voltage Cables 3Cx 500 mm² - (RD-A-1 /3)-Z4-A013-MV | 2027-03-31 → 2027-09-19 (+172d) | 2027-04-14 → 2027-10-04 (+173d) | resources Skilled labor [141.57 h]; Unskilled Labor [566.3 h]; Electrician [283.15 h]; Equipment Opreator [141.57 h]; Boom Truck [141.57 h]; Straight joints cables for 13.8 kv 3Cx 500 mm², Al /XLPE/LLDPE [26 Unit] → Skilled labor [141.6 h]; Unskilled Labor [566.3 h]; Electrician [283.15 h]; Equipment Opreator [141.6 h]; Boom Truck [141.6 h]; Straight joints cables for 13.8 kv 3Cx 500 mm², Al /XLPE/LLDPE [26 Unit] |
| RHD4CZ4A013MV3300 | Testing of Medium Voltage Cables 3Cx 500 mm² - (RD-A-1 /3)-Z4-A013-MV | 2027-04-15 → 2027-10-05 (+173d) | 2027-04-27 → 2027-10-17 (+173d) |  |
| 1982 | **RHD4-02-002-A013-(MV)-Medium Voltage cables 3Cx 50 mm²** | 2027-04-28 → 2027-10-18 (+173d) | 2027-04-29 → 2027-10-19 (+173d) |  |
| RHD4CZ4A013MV3401 | Termination of Medium Voltage Cables 3Cx 50 mm² - (RD-A-1 /3)-Z4-A013-MV | 2027-04-28 → 2027-10-18 (+173d) | 2027-04-29 → 2027-10-19 (+173d) |  |
| 4255 | **RHD4-02-002-Z4-A013-Low Voltage Network - LV** | 2026-12-08 → 2027-04-26 (+139d) | 2027-04-12 → 2027-10-02 (+173d) |  |
| 4256 | **RHD4-02-002-A013-(LV)-Low Voltage duct banks** | 2026-12-08 → 2027-04-26 (+139d) | 2026-12-17 → 2027-05-05 (+139d) |  |
| RHD4CZ4A013LV2100 | Excavation of Duct Banks for Low Voltage Network - (RD-A-1 /3)-Z4-A013-LV | 2026-12-08 → 2027-04-26 (+139d) | 2026-12-09 → 2027-04-27 (+139d) | resources Skilled labor [21.56 h]; Unskilled Labor [21.56 h]; Equipment Opreator [43.13 h]; Excavator-Poclain [21.56 h]; Dump Truck [21.56 h]; Duct bank for LV cables UPVC (2xø110mm) [2.97 m] → Skilled labor [21.6 h]; Unskilled Labor [21.6 h]; Equipment Opreator [43.13 h]; Excavator-Poclain [21.6 h]; Dump Truck [21.6 h]; Duct bank for LV cables UPVC (2xø110mm) [2.97 m] |
| RHD4CZ4A013LV2200 | Installation of Duct Banks for Low Voltage Network - (RD-A-1 /3)-Z4-A013-LV | 2026-12-10 → 2027-04-28 (+139d) | 2026-12-13 → 2027-05-01 (+139d) |  |
| RHD4CZ4A013LV2300 | Pouring of Duct Banks for Low Voltage Network - (RD-A-1 /3)-Z4-A013-LV | 2026-12-14 → 2027-05-02 (+139d) | 2026-12-15 → 2027-05-03 (+139d) | resources Skilled labor [21.56 h]; Unskilled Labor [21.56 h]; Equipment Opreator [8.6 h]; Concrete Mixer Truck [4.36 h]; Concrete Pump [4.36 h]; Duct bank for LV cables UPVC (2xø110mm) [19.31 m] → Skilled labor [21.6 h]; Unskilled Labor [21.6 h]; Equipment Opreator [8.6 h]; Concrete Mixer Truck [4.36 h]; Concrete Pump [4.36 h]; Duct bank for LV cables UPVC (2xø110mm) [19.31 m] |
| RHD4CZ4A013LV2400 | Backfilling of Duct Banks for Low Voltage Network - (RD-A-1 /3)-Z4-A013-LV | 2026-12-16 → 2027-05-04 (+139d) | 2026-12-17 → 2027-05-05 (+139d) | resources Skilled labor [16.23 h]; Unskilled Labor [16.23 h]; Equipment Opreator [6.43 h]; Excavator-Poclain [6.43 h]; Duct bank for LV cables UPVC (2xø110mm) [4.46 m] → Skilled labor [16.23 h]; Unskilled Labor [16.23 h]; Equipment Opreator [6.4 h]; Excavator-Poclain [6.4 h]; Duct bank for LV cables UPVC (2xø110mm) [4.46 m] |
| 4257 | **RHD4-02-002-A013-(LV)-Low Voltage Drawpit** | 2027-04-08 → 2027-09-28 (+173d) | 2027-04-12 → 2027-10-02 (+173d) |  |
| RHD4CZ4A013LV5100 | Excavation of Drawpit size 900x900x1000mm for Low Voltage Network - (RD-A-1 /3)-Z4-A013-LV | 2027-04-08 → 2027-09-28 (+173d) | 2027-04-10 → 2027-09-29 (+172d) |  |
| RHD4CZ4A013LV5200 | Installation of Drawpit size 900x900x1000mm for Low Voltage Network - (RD-A-1 /3)-Z4-A013-LV | 2027-04-11 → 2027-09-30 (+172d) | 2027-04-12 → 2027-10-02 (+173d) |  |
| 4258 | **RHD4-02-002-A013-(LV)-Low Voltage cables** | 2027-03-08 → 2027-08-30 (+175d) | 2027-03-31 → 2027-09-19 (+172d) |  |
| RHD4CZ4A013LV3100 | Excavation for Low Voltage Cables for Low Voltage Network - (RD-A-1 /3)-Z4-A013-LV | 2027-03-08 → 2027-08-30 (+175d) | 2027-03-16 → 2027-09-04 (+172d) |  |
| RHD4CZ4A013LV3200 | Cable Laying of Low Voltage Cables for Low Voltage Network - (RD-A-1 /3)-Z4-A013-LV | 2027-03-17 → 2027-09-05 (+172d) | 2027-03-22 → 2027-09-09 (+171d) |  |
| RHD4CZ4A013LV3300 | Warning tape and Backfill for Low Voltage Cables for Low Voltage Network - (RD-A-1 /3)-Z4-A013-LV | 2027-03-23 → 2027-09-11 (+172d) | 2027-03-28 → 2027-09-15 (+171d) |  |
| RHD4CZ4A013LV3400 | Testing of Low Voltage Cables for Low Voltage Network - (RD-A-1 /3)-Z4-A013-LV | 2027-03-29 → 2027-09-16 (+171d) | 2027-03-31 → 2027-09-19 (+172d) |  |
| 4259 | **RHD4-02-002-A013-(LV)-Low Voltage Distribution Pillars** | 2027-04-01 → 2027-09-20 (+172d) | 2027-04-07 → 2027-09-27 (+173d) |  |
| RHD4CZ4A013LV4100 | Leveling for Distribution Pillars for Low Voltage Network - (RD-A-1 /3)-Z4-A013-LV | 2027-04-01 → 2027-09-20 (+172d) | 2027-04-03 → 2027-09-21 (+171d) |  |
| RHD4CZ4A013LV4200 | Lean Concrete for Distribution Pillars for Low Voltage Network - (RD-A-1 /3)-Z4-A013-LV | 2027-04-04 → 2027-09-22 (+171d) | 2027-04-05 → 2027-09-25 (+173d) |  |
| RHD4CZ4A013LV4300 | Installation of Distribution Pillars for Low Voltage Network - (RD-A-1 /3)-Z4-A013-LV | 2027-04-06 → 2027-09-26 (+173d) | 2027-04-07 → 2027-09-27 (+173d) |  |
| 3126 | **RHD4-02-002-Z4-A013-Street Lighting Network - SL** | 2026-12-10 → 2027-04-28 (+139d) | 2027-02-06 → 2027-06-29 (+143d) |  |
| 3127 | **RHD4-02-002-A013-(SL)-Street Lighting duct banks** | 2026-12-10 → 2027-04-28 (+139d) | 2026-12-23 → 2027-05-11 (+139d) |  |
| RHD4CZ4A013SL2100 | Excavation of Duct Banks for Street Lighting Network - (RD-A-1 /3)-Z4-A013-SL | 2026-12-10 → 2027-04-28 (+139d) | 2026-12-13 → 2027-05-01 (+139d) |  |
| RHD4CZ4A013SL2200 | Installation of Duct Banks for Street Lighting Network - (RD-A-1 /3)-Z4-A013-SL | 2026-12-14 → 2027-05-02 (+139d) | 2026-12-17 → 2027-05-05 (+139d) |  |
| RHD4CZ4A013SL2300 | Pouring of Duct Banks for Street Lighting Network - (RD-A-1 /3)-Z4-A013-SL | 2026-12-19 → 2027-05-06 (+138d) | 2026-12-21 → 2027-05-09 (+139d) |  |
| RHD4CZ4A013SL2400 | Backfilling of Duct Banks for Street Lighting Network - (RD-A-1 /3)-Z4-A013-SL | 2026-12-22 → 2027-05-10 (+139d) | 2026-12-23 → 2027-05-11 (+139d) |  |
| 3129 | **RHD4-02-002-A013-(SL)-Street Lighting cables** | 2027-01-11 → 2027-06-03 (+143d) | 2027-02-06 → 2027-06-29 (+143d) |  |
| RHD4CZ4A013SL3100 | Excavation for Street Lighting Cables for Street Lighting Network - (RD-A-1 /3)-Z4-A013-SL | 2027-01-11 → 2027-06-03 (+143d) | 2027-01-18 → 2027-06-10 (+143d) |  |
| RHD4CZ4A013SL3200 | Cable Laying of Street Lighting Cables for Street Lighting Network - (RD-A-1 /3)-Z4-A013-SL | 2027-01-19 → 2027-06-12 (+144d) | 2027-01-25 → 2027-06-17 (+143d) | resources Skilled labor [60.77 h]; Unskilled Labor [242.96 h]; Electrician [121.43 h]; Equipment Opreator [182.2 h]; Boom Truck [60.77 h]; Cable Laying Machine [121.43 h]; Cable, Copper 4x25mm2/ CU/XLPE/SWA/PVC + 1x16mm2 CU/PVC [575.07 m]; Cable, Copper 4x16mm2/ CU/XLPE/SWA/PVC + 1x16mm2 CU/PVC [278.7 m]; Cable, Copper 4x10mm2/ CU/XLPE/SWA/PVC + 1x10mm2 CU/PVC [150.09 m] → Skilled labor [60.8 h]; Unskilled Labor [242.96 h]; Electrician [121.43 h]; Equipment Opreator [182.2 h]; Boom Truck [60.8 h]; Cable Laying Machine [121.43 h]; Cable, Copper 4x25mm2/ CU/XLPE/SWA/PVC + 1x16mm2 CU/PVC [575.07 m]; Cable, Copper 4x16mm2/ CU/XLPE/SWA/PVC + 1x16mm2 CU/PVC [278.7 m]; Cable, Copper 4x10mm2/ CU/XLPE/SWA/PVC + 1x10mm2 CU/PVC [150.09 m] |
| RHD4CZ4A013SL3300 | Warning tape and Backfill for Street Lighting Cables for Street Lighting Network - (RD-A-1 /3)-Z4-A013-SL | 2027-01-26 → 2027-06-19 (+144d) | 2027-02-01 → 2027-06-24 (+143d) | resources Skilled labor [60.77 h]; Unskilled Labor [242.96 h]; Electrician [121.43 h]; Equipment Opreator [60.77 h]; Boom Truck [60.77 h]; Cable, Copper 4x25mm2/ CU/XLPE/SWA/PVC + 1x16mm2 CU/PVC [143.77 m]; Cable, Copper 4x16mm2/ CU/XLPE/SWA/PVC + 1x16mm2 CU/PVC [69.68 m]; Cable, Copper 4x10mm2/ CU/XLPE/SWA/PVC + 1x10mm2 CU/PVC [37.52 m] → Skilled labor [60.8 h]; Unskilled Labor [242.96 h]; Electrician [121.43 h]; Equipment Opreator [60.8 h]; Boom Truck [60.8 h]; Cable, Copper 4x25mm2/ CU/XLPE/SWA/PVC + 1x16mm2 CU/PVC [143.77 m]; Cable, Copper 4x16mm2/ CU/XLPE/SWA/PVC + 1x16mm2 CU/PVC [69.68 m]; Cable, Copper 4x10mm2/ CU/XLPE/SWA/PVC + 1x10mm2 CU/PVC [37.52 m] |
| RHD4CZ4A013SL3400 | Testing of Street Lighting Cables for Street Lighting Network - (RD-A-1 /3)-Z4-A013-SL | 2027-02-02 → 2027-06-26 (+144d) | 2027-02-06 → 2027-06-29 (+143d) |  |
| 3130 | **RHD4-02-002-A013-(SL)-Street Lighting Poles** | 2026-12-24 → 2027-05-12 (+139d) | 2027-01-24 → 2027-06-16 (+143d) |  |
| RHD4CZ4A013SL1100 | Excavation for RC Base for Lighting Poles for Street Lighting Network - (RD-A-1 /3)-Z4-A013-SL | 2026-12-24 → 2027-05-12 (+139d) | 2026-12-28 → 2027-05-20 (+143d) |  |
| RHD4CZ4A013SL1200 | Installation for RC Base for Lighting Poles for Street Lighting Network - (RD-A-1 /3)-Z4-A013-SL | 2026-12-29 → 2027-05-22 (+144d) | 2027-01-02 → 2027-05-25 (+143d) |  |
| RHD4CZ4A013SL1300 | Backfill for RC Base for Lighting Poles for Street Lighting Network - (RD-A-1 /3)-Z4-A013-SL | 2027-01-03 → 2027-05-26 (+143d) | 2027-01-06 → 2027-05-30 (+144d) |  |
| RHD4CZ4A013SL1400 | Installation for Lighting Poles for Street Lighting Network - (RD-A-1 /3)-Z4-A013-SL | 2027-01-07 → 2027-05-31 (+144d) | 2027-01-13 → 2027-06-06 (+144d) |  |
| RHD4CZ4A013SL1500 | Luminaire Installation for Lighting Poles for Street Lighting Network - (RD-A-1 /3)-Z4-A013-SL | 2027-01-17 → 2027-06-09 (+143d) | 2027-01-24 → 2027-06-16 (+143d) |  |
| 3132 | **RHD4-02-002-A013-(SL)-Street Lighting Earthing System** | 2027-01-14 → 2027-06-07 (+144d) | 2027-01-16 → 2027-06-08 (+143d) |  |
| RHD4CZ4A013SL6100 | Installation of Earthing for Lighting Poles and Fedder Pillers for Street Lighting Network - (RD-A-1 /3)-Z4-A013-SL | 2027-01-14 → 2027-06-07 (+144d) | 2027-01-16 → 2027-06-08 (+143d) |  |
| 3128 | **RHD4-02-002-A013-(SL)-Street Lighting Drawpit** | 2026-12-29 → 2027-05-22 (+144d) | 2027-01-02 → 2027-05-25 (+143d) |  |
| RHD4CZ4A013SL5100 | Excavation of Drawpit size 600x600x900mm for Street Lighting Network - (RD-A-1 /3)-Z4-A013-SL | 2026-12-29 → 2027-05-22 (+144d) | 2026-12-30 → 2027-05-23 (+144d) |  |
| RHD4CZ4A013SL5200 | Installation of Drawpit size 600x600x900mm for Street Lighting Network - (RD-A-1 /3)-Z4-A013-SL | 2026-12-31 → 2027-05-24 (+144d) | 2027-01-02 → 2027-05-25 (+143d) |  |
| 3138 | **RHD4-02-002-Z4-A013-Telecommunications Network - TC** | 2027-01-07 → 2027-05-31 (+144d) | 2027-02-13 → 2027-07-06 (+143d) |  |
| 3139 | **RHD4-02-002-A013-(TC)-Telecommunications Ducts** | 2027-01-07 → 2027-05-31 (+144d) | 2027-02-13 → 2027-07-06 (+143d) |  |
| RHD4CZ4A013TC2100 | Excavation of HDPE Ducts for Telecom Network - (RD-A-1 /3)-Z4-A013-TC | 2027-01-07 → 2027-05-31 (+144d) | 2027-01-17 → 2027-06-09 (+143d) | resources Skilled labor [96.82 h]; Unskilled Labor [96.82 h]; Equipment Opreator [193.52 h]; Excavator-Poclain [96.82 h]; Dump Truck [96.82 h]; (6*50mm) HDPE ducts -TC [266.55 m] → Skilled labor [96.8 h]; Unskilled Labor [96.8 h]; Equipment Opreator [193.52 h]; Excavator-Poclain [96.8 h]; Dump Truck [96.8 h]; (6*50mm) HDPE ducts -TC [266.55 m] |
| RHD4CZ4A013TC2200 | Installation of HDPE Ducts for Telecom Network - (RD-A-1 /3)-Z4-A013-TC | 2027-01-18 → 2027-06-10 (+143d) | 2027-02-02 → 2027-06-26 (+144d) |  |

| ID | Task | Start | Finish | Duration | Complete | Other |
| --- | --- | --- | --- | --- | --- | --- |
| RHD4CZ4A013TC2400 | Backfilling of HDPE Ducts for Telecom Network - (RD-A-1 /3)-Z4-A013-TC | 2027-02-03 → 2027-06-27 (+144d) | 2027-02-13 → 2027-07-06 (+143d) |  |  | resources Skilled labor [96.82 h]; Unskilled Labor [96.82 h]; Equipment Opreator [38.66 h]; Excavator-Poclain [38.66 h]; (6*50mm) HDPE ducts -TC [199.91 m] → Skilled labor [96.8 h]; Unskilled Labor [96.8 h]; Equipment Opreator [38.66 h]; Excavator-Poclain [38.66 h]; (6*50mm) HDPE ducts -TC [199.91 m] |
| 3140 | **RHD4-02-002-A013-(TC)-Telecommunications Manholes** | 2027-01-18 → 2027-06-10 (+143d) | 2027-01-24 → 2027-06-16 (+143d) |  |  |  |
| RHD4CZ4A013TC5100 | Excavation for Manholes for Telecom Network - (RD-A-1 /3)-Z4-A013-TC | 2027-01-18 → 2027-06-10 (+143d) | 2027-01-20 → 2027-06-13 (+144d) |  |  | resources Skilled labor [9.58 h]; Unskilled Labor [9.58 h]; Equipment Opreator [7.62 h]; Excavator-Poclain [3.81 h]; Dump Truck [3.81 h]; Manhole Type 1 - TC [0.75 nr]; Manhole Type 2 - TC [0.15 nr] → Skilled labor [9.6 h]; Unskilled Labor [9.6 h]; Equipment Opreator [7.62 h]; Excavator-Poclain [3.81 h]; Dump Truck [3.81 h]; Manhole Type 1 - TC [0.75 nr]; Manhole Type 2 - TC [0.15 nr] |
| RHD4CZ4A013TC5200 | Installation of Manholes for Telecom Network - (RD-A-1 /3)-Z4-A013-TC | 2027-01-21 → 2027-06-14 (+144d) | 2027-01-24 → 2027-06-16 (+143d) |  |  | resources Skilled labor [9.58 h]; Unskilled Labor [9.58 h]; Equipment Opreator [3.81 h]; Boom Truck [3.81 h]; Manhole Type 1 - TC [4.25 nr]; Manhole Type 2 - TC [0.85 nr] → Skilled labor [9.6 h]; Unskilled Labor [9.6 h]; Equipment Opreator [3.81 h]; Boom Truck [3.81 h]; Manhole Type 1 - TC [4.25 nr]; Manhole Type 2 - TC [0.85 nr] |
| 3142 | **RHD4-02-002-Z4-A013-Information and Communication Technologies - ICT** | 2026-12-14 → 2027-05-02 (+139d) | 2027-04-03 → 2027-08-19 (+138d) |  |  |  |
| 3143 | **RHD4-02-002-A013-(ICT)-Information and Communication Technologies Ducts** | 2027-02-02 → 2027-06-26 (+144d) | 2027-04-03 → 2027-08-19 (+138d) |  |  |  |
| RHD4CZ4A013ICT2100 | Excavation of HDPE Ducts for ICT Network - (RD-A-1 /3)-Z4-A013-ICT | 2027-02-02 → 2027-06-26 (+144d) | 2027-02-21 → 2027-07-14 (+143d) |  |  |  |
| RHD4CZ4A013ICT2200 | Installation of HDPE Ducts for ICT Network - (RD-A-1 /3)-Z4-A013-ICT | 2027-02-23 → 2027-07-15 (+142d) | 2027-03-07 → 2027-07-27 (+142d) |  |  |  |
| RHD4CZ4A013ICT2400 | Backfilling of HDPE Ducts for ICT Network - (RD-A-1 /3)-Z4-A013-ICT | 2027-03-15 → 2027-08-01 (+139d) | 2027-04-03 → 2027-08-19 (+138d) |  |  |  |
| 3144 | **RHD4-02-002-A013-(ICT)-Information and Communication Technologies Manholes** | 2027-02-23 → 2027-07-15 (+142d) | 2027-03-14 → 2027-07-31 (+139d) |  |  |  |
| RHD4CZ4A013ICT5100 | Excavation for Manholes for ICT Network - (RD-A-1 /3)-Z4-A013-ICT | 2027-02-23 → 2027-07-15 (+142d) | 2027-03-02 → 2027-07-22 (+142d) |  |  |  |
| RHD4CZ4A013ICT5200 | Installation of Manholes for ICT Network - (RD-A-1 /3)-Z4-A013-ICT | 2027-03-03 → 2027-07-24 (+143d) | 2027-03-14 → 2027-07-31 (+139d) |  |  |  |
| 5415 | **RHD4-02-002-A013-(ICT)-Information and Communication Technologies Road Crossings** | 2026-12-14 → 2027-05-02 (+139d) | 2027-01-07 → 2027-05-31 (+144d) |  |  |  |
| RHD4CZ4A013ICT3100 | Excavation for Road Crossings for ICT Network - (RD-A-1 /3)-Z4-A013-ICT | 2026-12-14 → 2027-05-02 (+139d) | 2026-12-19 → 2027-05-06 (+138d) |  |  |  |
| RHD4CZ4A013ICT3200 | Installation of Road Crossings for ICT Network - (RD-A-1 /3)-Z4-A013-ICT | 2026-12-20 → 2027-05-08 (+139d) | 2026-12-26 → 2027-05-13 (+138d) |  |  |  |
| RHD4CZ4A013ICT3300 | Pouring of Road Crossings for ICT Network - (RD-A-1 /3)-Z4-A013-ICT | 2026-12-27 → 2027-05-19 (+143d) | 2027-01-02 → 2027-05-25 (+143d) |  |  |  |
| RHD4CZ4A013ICT3400 | Backfilling of Road Crossings for ICT Network - (RD-A-1 /3)-Z4-A013-ICT | 2027-01-03 → 2027-05-26 (+143d) | 2027-01-07 → 2027-05-31 (+144d) |  |  |  |
| 3163 | **RHD4-02-002-Z4-RA02** | 2026-08-24 → 2026-06-30 (-55d) | 2027-03-28 → 2027-08-14 (+139d) |  |  |  |
| 3342 | **RHD4-02-002-Z4-RA02-Road Works - RD** | 2026-08-24 → 2026-06-30 (-55d) | 2027-03-28 → 2027-08-14 (+139d) |  |  |  |
| 3343 | **RHD4-02-002-RA02-(RD)-Subgrade** | 2026-08-24 → 2026-06-30 (-55d) | 2026-08-29 → 2026-07-19 (-41d) |  |  |  |
| RHD4CZ4RA02RD1100 | Supply, lay and compaction subgrade compacted thickness 300 mm for Roads - (ROUND-02)-Z4-RA02-RD | 2026-08-24 → 2026-06-30 A (-55d) | 2026-08-29 → 2026-07-19 A (-41d) |  | 0% → 100% |  |
| 3344 | **RHD4-02-002-RA02-(RD)-Aggregate Base Course** | 2026-08-30 → 2027-02-08 (+162d) | 2026-09-03 → 2027-02-13 (+163d) |  |  |  |
| RHD4CZ4RA02RD2100 | Supply, lay and compaction Aggregate base course compacted thickness 300 mmfor Roads - (ROUND-02)-Z4-RA02-RD | 2026-08-30 → 2027-02-08 (+162d) | 2026-09-03 → 2027-02-13 (+163d) |  |  |  |
| 3345 | **RHD4-02-002-RA02-(RD)-Bituminous base course Two Layers, including (MC1)&(RC2)** | 2026-09-05 → 2027-02-14 (+162d) | 2027-02-15 → 2027-07-08 (+143d) |  |  |  |
| RHD4CZ4RA02RD3100 | Supply, lay and Asphaltic base course including Prime Coat (MC1) for 1st Layer - (ROUND-02)-Z4-RA02-RD | 2026-09-05 → 2027-02-14 (+162d) | 2026-09-07 → 2027-02-16 (+162d) |  |  |  |
| RHD4CZ4RA02RD3200 | Supply, lay and Asphaltic base course including Tack Coat (RC2) for 2nd Layer - (ROUND-02)-Z4-RA02-RD | 2027-02-13 → 2027-07-06 (+143d) | 2027-02-15 → 2027-07-08 (+143d) |  |  |  |
| 3347 | **RHD4-02-002-RA02-(RD)-Precast Concrete Curb** | 2027-02-16 → 2027-07-10 (+144d) | 2027-02-23 → 2027-07-15 (+142d) |  |  |  |
| RHD4CZ4RA02RD5100 | Supply and installation Precast Concrete Kerb for Roads - (ROUND-02)-Z4-RA02-RD | 2027-02-16 → 2027-07-10 (+144d) | 2027-02-23 → 2027-07-15 (+142d) |  |  | resources Mason [176.42 h]; Skilled labor [58.81 h]; Unskilled Labor [176.42 h]; Equipment Opreator [117.62 h]; Bobcat [58.81 h]; Concrete Mixer Truck [58.81 h]; Precast Concrete Curbstone, type K1 [2430 m] → Mason [176.42 h]; Skilled labor [58.81 h]; Unskilled Labor [176.42 h]; Equipment Opreator [117.6 h]; Bobcat [58.81 h]; Concrete Mixer Truck [58.81 h]; Precast Concrete Curbstone, type K1 [2430 m] |
| 3350 | **RHD4-02-002-RA02-(RD)-Traffic Signage** | 2027-02-24 → 2027-07-17 (+143d) | 2027-03-07 → 2027-07-27 (+142d) |  |  |  |
| RHD4CZ4RA02RD8100 | Installation of Traffic Signage for Road Network - (ROUND-02)-Z4-RA02-RD | 2027-02-24 → 2027-07-17 (+143d) | 2027-03-07 → 2027-07-27 (+142d) |  |  |  |
| 3346 | **RHD4-02-002-RA02-(RD)-Bituminous concrete wearing course including tack coat (RC2)** | 2027-02-24 → 2027-07-17 (+143d) | 2027-02-25 → 2027-07-18 (+143d) |  |  |  |
| RHD4CZ4RA02RD4100 | Supply, lay and compaction Asphaltic wearing course including tack Coat (RC2)for Road Network - (ROUND-02)-Z4-RA02-RD | 2027-02-24 → 2027-07-17 (+143d) | 2027-02-25 → 2027-07-18 (+143d) |  |  |  |
| 3349 | **RHD4-02-002-RA02-(RD)-Pavement Marking** | 2027-02-27 → 2027-07-19 (+142d) | 2027-03-28 → 2027-08-14 (+139d) |  |  |  |
| RHD4CZ4RA02RD7100 | Pavement Markings for Road Network - (ROUND-02)-Z4-RA02-RD | 2027-02-27 → 2027-07-19 (+142d) | 2027-03-07 → 2027-07-27 (+142d) |  |  |  |
| RHD4CZ4RA02RD9100 | Installation for Speed Bump for Road Network - (ROUND-02)-Z4-RA02-RD | 2027-03-08 → 2027-07-28 (+142d) | 2027-03-28 → 2027-08-14 (+139d) |  |  |  |
| 3315 | **RHD4-02-002-Z4-RA02-Street Lighting Network - SL** | 2026-12-14 → 2027-05-02 (+139d) | 2027-01-17 → 2027-06-09 (+143d) |  |  |  |
| 3316 | **RHD4-02-002-RA02-(SL)-Street Lighting duct banks** | 2026-12-14 → 2027-05-02 (+139d) | 2026-12-27 → 2027-05-19 (+143d) |  |  |  |
| RHD4CZ4RA02SL2100 | Excavation of Duct Banks for Street Lighting Network - (ROUND-02)-Z4-RA02-SL | 2026-12-14 → 2027-05-02 (+139d) | 2026-12-16 → 2027-05-04 (+139d) |  |  |  |
| RHD4CZ4RA02SL2200 | Installation of Duct Banks for Street Lighting Network - (ROUND-02)-Z4-RA02-SL | 2026-12-17 → 2027-05-05 (+139d) | 2026-12-21 → 2027-05-09 (+139d) |  |  |  |
| RHD4CZ4RA02SL2300 | Pouring of Duct Banks for Street Lighting Network - (ROUND-02)-Z4-RA02-SL | 2026-12-22 → 2027-05-10 (+139d) | 2026-12-24 → 2027-05-12 (+139d) |  |  |  |
| RHD4CZ4RA02SL2400 | Backfilling of Duct Banks for Street Lighting Network - (ROUND-02)-Z4-RA02-SL | 2026-12-26 → 2027-05-13 (+138d) | 2026-12-27 → 2027-05-19 (+143d) |  |  |  |
| 3318 | **RHD4-02-002-RA02-(SL)-Street Lighting cables** | 2026-12-17 → 2027-05-05 (+139d) | 2026-12-26 → 2027-05-13 (+138d) |  |  |  |
| RHD4CZ4RA02SL3100 | Excavation for Street Lighting Cables for Street Lighting Network - (ROUND-02)-Z4-RA02-SL | 2026-12-17 → 2027-05-05 (+139d) | 2026-12-19 → 2027-05-06 (+138d) |  |  | resources Skilled labor [13.61 h]; Unskilled Labor [27.23 h]; Equipment Opreator [27.23 h]; Excavator-Poclain [13.61 h]; Boom Truck [13.61 h]; Cable, Copper 4x10mm2/ CU/XLPE/SWA/PVC + 1x10mm2 CU/PVC [62.52 m] → Skilled labor [13.6 h]; Unskilled Labor [27.2 h]; Equipment Opreator [27.2 h]; Excavator-Poclain [13.6 h]; Boom Truck [13.6 h]; Cable, Copper 4x10mm2/ CU/XLPE/SWA/PVC + 1x10mm2 CU/PVC [62.52 m] |
| RHD4CZ4RA02SL3200 | Cable Laying of Street Lighting Cables for Street Lighting Network - (ROUND-02)-Z4-RA02-SL | 2026-12-20 → 2027-05-08 (+139d) | 2026-12-21 → 2027-05-09 (+139d) |  |  |  |
| RHD4CZ4RA02SL3300 | Warning tape and Backfill for Street Lighting Cables for Street Lighting Network - (ROUND-02)-Z4-RA02-SL | 2026-12-22 → 2027-05-10 (+139d) | 2026-12-23 → 2027-05-11 (+139d) |  |  |  |
| RHD4CZ4RA02SL3400 | Testing of Street Lighting Cables for Street Lighting Network - (ROUND-02)-Z4-RA02-SL | 2026-12-24 → 2027-05-12 (+139d) | 2026-12-26 → 2027-05-13 (+138d) |  |  | resources Skilled labor [6.86 h]; Unskilled Labor [27.23 h]; Electrician [13.61 h]; Equipment Opreator [6.86 h]; Boom Truck [6.86 h]; Cable, Copper 4x10mm2/ CU/XLPE/SWA/PVC + 1x10mm2 CU/PVC [15.63 m] → Skilled labor [6.86 h]; Unskilled Labor [27.2 h]; Electrician [13.6 h]; Equipment Opreator [6.86 h]; Boom Truck [6.86 h]; Cable, Copper 4x10mm2/ CU/XLPE/SWA/PVC + 1x10mm2 CU/PVC [15.63 m] |
| 3319 | **RHD4-02-002-RA02-(SL)-Street Lighting Poles** | 2026-12-28 → 2027-05-20 (+143d) | 2027-01-07 → 2027-05-31 (+144d) |  |  |  |
| RHD4CZ4RA02SL1100 | Excavation for RC Base for Lighting Poles for Street Lighting Network - (ROUND-02)-Z4-RA02-SL | 2026-12-28 → 2027-05-20 (+143d) | 2026-12-29 → 2027-05-22 (+144d) |  |  | resources Skilled labor [7.95 h]; Unskilled Labor [7.95 h]; Equipment Opreator [16.01 h]; Excavator-Poclain [7.95 h]; Dump Truck [7.95 h]; Lighting poles single arms, height of ( 10 ) meters [1.1 Unit] → Skilled labor [7.95 h]; Unskilled Labor [7.95 h]; Equipment Opreator [16 h]; Excavator-Poclain [7.95 h]; Dump Truck [7.95 h]; Lighting poles single arms, height of ( 10 ) meters [1.1 Unit] |
| RHD4CZ4RA02SL1200 | Installation for RC Base for Lighting Poles for Street Lighting Network - (ROUND-02)-Z4-RA02-SL | 2026-12-30 → 2027-05-23 (+144d) | 2026-12-31 → 2027-05-24 (+144d) |  |  | resources Skilled labor [7.95 h]; Unskilled Labor [7.95 h]; Equipment Opreator [16.01 h]; Excavator-Poclain [7.95 h]; Dump Truck [7.95 h]; Lighting poles single arms, height of ( 10 ) meters [2.75 Unit] → Skilled labor [7.95 h]; Unskilled Labor [7.95 h]; Equipment Opreator [16 h]; Excavator-Poclain [7.95 h]; Dump Truck [7.95 h]; Lighting poles single arms, height of ( 10 ) meters [2.75 Unit] |
| RHD4CZ4RA02SL1300 | Backfill for RC Base for Lighting Poles for Street Lighting Network - (ROUND-02)-Z4-RA02-SL | 2027-01-02 → 2027-05-25 (+143d) | 2027-01-03 → 2027-05-26 (+143d) |  |  | resources Skilled labor [7.95 h]; Unskilled Labor [7.95 h]; Equipment Opreator [16.01 h]; Excavator-Poclain [7.95 h]; Dump Truck [7.95 h]; Lighting poles single arms, height of ( 10 ) meters [0.55 Unit] → Skilled labor [7.95 h]; Unskilled Labor [7.95 h]; Equipment Opreator [16 h]; Excavator-Poclain [7.95 h]; Dump Truck [7.95 h]; Lighting poles single arms, height of ( 10 ) meters [0.55 Unit] |
| RHD4CZ4RA02SL1400 | Installation for Lighting Poles for Street Lighting Network - (ROUND-02)-Z4-RA02-SL | 2027-01-04 → 2027-05-27 (+143d) | 2027-01-05 → 2027-05-29 (+144d) |  |  | resources Skilled labor [11.98 h]; Unskilled Labor [11.98 h]; Electrician [11.98 h]; Equipment Opreator [11.98 h]; Boom Truck [11.98 h]; Lighting poles single arms, height of ( 10 ) meters [6.6 Unit] → Skilled labor [12 h]; Unskilled Labor [12 h]; Electrician [12 h]; Equipment Opreator [12 h]; Boom Truck [12 h]; Lighting poles single arms, height of ( 10 ) meters [6.6 Unit] |
| RHD4CZ4RA02SL1500 | Luminaire Installation for Lighting Poles for Street Lighting Network - (ROUND-02)-Z4-RA02-SL | 2027-01-06 → 2027-05-30 (+144d) | 2027-01-07 → 2027-05-31 (+144d) |  |  | resources Unskilled Labor [16.01 h]; Electrician [7.95 h]; Equipment Opreator [1.63 h]; Boom Truck [3.16 h]; Street Lighting( LED) Luminaire of Output ?10898 lumen [11 Unit] → Unskilled Labor [16 h]; Electrician [7.95 h]; Equipment Opreator [1.6 h]; Boom Truck [3.16 h]; Street Lighting( LED) Luminaire of Output ?10898 lumen [11 Unit] |
| 5023 | **RHD4-02-002-RA02-(SL)-Street Lighting Feeder Pillars** | 2027-01-09 → 2027-06-01 (+143d) | 2027-01-14 → 2027-06-07 (+144d) |  |  |  |
| RHD4CZ4RA02SL4100 | Leveling for Distribution Pillars for Street Lighting Network - (ROUND-02)-Z4-RA02-SL | 2027-01-09 → 2027-06-01 (+143d) | 2027-01-10 → 2027-06-02 (+143d) |  |  |  |
| RHD4CZ4RA02SL4200 | Lean Concrete for Distribution Pillars for Street Lighting Network - (ROUND-02)-Z4-RA02-SL | 2027-01-11 → 2027-06-03 (+143d) | 2027-01-12 → 2027-06-05 (+144d) |  |  |  |
| RHD4CZ4RA02SL4300 | Installation of Distribution Pillars for Street Lighting Network - (ROUND-02)-Z4-RA02-SL | 2027-01-13 → 2027-06-06 (+144d) | 2027-01-14 → 2027-06-07 (+144d) |  |  |  |
| 5024 | **RHD4-02-002-RA02-(SL)-Street Lighting Earthing System** | 2027-01-16 → 2027-06-08 (+143d) | 2027-01-17 → 2027-06-09 (+143d) |  |  |  |
| RHD4CZ4RA02SL6100 | Installation of Earthing for Lighting Poles and Fedder Pillers for Street Lighting Network - (ROUND-02)-Z4-RA02-SL | 2027-01-16 → 2027-06-08 (+143d) | 2027-01-17 → 2027-06-09 (+143d) |  |  | resources Skilled labor [0.76 h]; Unskilled Labor [0.76 h]; Equipment Opreator [1.42 h]; Excavator-Poclain [0.76 h]; Dump Truck [0.76 h]; Street Lighting Feeder pillars - ER [1 Unit] → Skilled labor [0.8 h]; Unskilled Labor [0.8 h]; Equipment Opreator [1.42 h]; Excavator-Poclain [0.8 h]; Dump Truck [0.8 h]; Street Lighting Feeder pillars - ER [1 Unit] |
| 3317 | **RHD4-02-002-RA02-(SL)-Street Lighting Drawpit** | 2026-12-26 → 2027-05-13 (+138d) | 2026-12-29 → 2027-05-22 (+144d) |  |  |  |
| RHD4CZ4RA02SL5100 | Excavation of Drawpit size 600x600x900mm for Street Lighting Network - (ROUND-02)-Z4-RA02-SL | 2026-12-26 → 2027-05-13 (+138d) | 2026-12-27 → 2027-05-19 (+143d) |  |  |  |
| RHD4CZ4RA02SL5200 | Installation of Drawpit size 600x600x900mm for Street Lighting Network - (ROUND-02)-Z4-RA02-SL | 2026-12-28 → 2027-05-20 (+143d) | 2026-12-29 → 2027-05-22 (+144d) |  |  |  |
| 3335 | **RHD4-02-002-Z4-RA02-Security Network - CCTV** | 2027-01-18 → 2027-06-10 (+143d) | 2027-02-11 → 2027-07-05 (+144d) |  |  |  |
| 3336 | **RHD4-02-002-RA02-(CCTV)-Civil Works** | 2027-01-18 → 2027-06-10 (+143d) | 2027-01-28 → 2027-06-21 (+144d) |  |  |  |
| RHD4CZ4RA02CCTV2100 | Civil Works for Security Network - (ROUND-02)-Z4-RA02-CCTV | 2027-01-18 → 2027-06-10 (+143d) | 2027-01-28 → 2027-06-21 (+144d) |  |  |  |
| 2959 | **RHD4-02-002-RA02-(CCTV)-CCTV Poles** | 2027-01-18 → 2027-06-10 (+143d) | 2027-01-28 → 2027-06-21 (+144d) |  |  |  |
| RHD4CZ4RA02CCTV1100 | Excavation for RC Base for CCTV Poles for Security Network - (RD-C-3/1)-Z4-C031-CCTV | 2027-01-18 → 2027-06-10 (+143d) | 2027-01-19 → 2027-06-12 (+144d) |  |  | resources Skilled labor [4.32 h]; Unskilled Labor [4.32 h]; Equipment Opreator [8.64 h]; Excavator-Poclain [2.18 h]; Dump Truck [2.18 h]; 25 Meters pole for CCTV Cameras [0.1 nr] → Skilled labor [4.32 h]; Unskilled Labor [4.32 h]; Equipment Opreator [8.64 h]; Excavator-Poclain [2.16 h]; Dump Truck [2.16 h]; 25 Meters pole for CCTV Cameras [0.1 nr] |
| RHD4CZ4RA02CCTV1200 | Installation for RC Base for CCTV Poles for Security Network - (RD-C-3/1)-Z4-C031-CCTV | 2027-01-20 → 2027-06-13 (+144d) | 2027-01-21 → 2027-06-14 (+144d) |  |  | resources Skilled labor [4.32 h]; Unskilled Labor [4.32 h]; Equipment Opreator [8.64 h]; Excavator-Poclain [2.18 h]; Dump Truck [2.18 h]; 25 Meters pole for CCTV Cameras [0.25 nr] → Skilled labor [4.32 h]; Unskilled Labor [4.32 h]; Equipment Opreator [8.64 h]; Excavator-Poclain [2.16 h]; Dump Truck [2.16 h]; 25 Meters pole for CCTV Cameras [0.25 nr] |
| RHD4CZ4RA02CCTV1300 | Backfill for RC Base for CCTV Poles for Security Network - (RD-C-3/1)-Z4-C031-CCTV | 2027-01-23 → 2027-06-15 (+143d) | 2027-01-24 → 2027-06-17 (+144d) | 2d → 2.03d |  | resources Skilled labor [2.88 h]; Unskilled Labor [2.88 h]; Equipment Opreator [5.44 h]; Excavator-Poclain [1.42 h]; Dump Truck [1.42 h]; 25 Meters pole for CCTV Cameras [0.05 nr] → Skilled labor [2.88 h]; Unskilled Labor [2.88 h]; Equipment Opreator [5.44 h]; Excavator-Poclain [1.44 h]; Dump Truck [1.44 h]; 25 Meters pole for CCTV Cameras [0.05 nr] |
| RHD4CZ4RA02CCTV1400 | Installation for CCTV Poles for Security Network - (RD-C-3/1)-Z4-C031-CCTV | 2027-01-25 → 2027-06-17 (+143d) | 2027-01-26 → 2027-06-20 (+145d) |  |  | resources Skilled labor [7.2 h]; Unskilled Labor [14.56 h]; Electrician [7.2 h]; Equipment Opreator [7.2 h]; Boom Truck [3.59 h]; 25 Meters pole for CCTV Cameras [0.6 nr] → Skilled labor [7.2 h]; Unskilled Labor [14.56 h]; Electrician [7.2 h]; Equipment Opreator [7.2 h]; Boom Truck [3.6 h]; 25 Meters pole for CCTV Cameras [0.6 nr] |
| RHD4CZ4RA02CCTV1500 | Protection post Installation for CCTV Poles for Security Network - (RD-C-3/1)-Z4-C031-CCTV | 2027-01-27 → 2027-06-20 (+144d) | 2027-01-28 → 2027-06-21 (+144d) |  |  |  |

| ID | Task | Start | Finish | Duration | Complete | Predecessors | Other |
| --- | --- | --- | --- | --- | --- | --- | --- |
| 2960 | **RHD4-02-002-RA02-(CCTV)-Camera** | 2027-01-30 → 2027-06-22 (+143d) | 2027-01-31 → 2027-06-23 (+143d) |  |  |  |  |
| RHD4CZ4RA02CCTV3100 | Installation for Cameras for Security Network - (RD-C-3/1)-Z4-C031-CCTV | 2027-01-30 → 2027-06-22 (+143d) | 2027-01-31 → 2027-06-23 (+143d) |  |  |  |  |
| 2961 | **RHD4-02-002-RA02-(CCTV)-Power and Infrastructure** | 2027-01-27 → 2027-06-20 (+144d) | 2027-01-31 → 2027-06-23 (+143d) |  |  |  |  |
| RHD4CZ4RA02CCTV4100 | Installation of Power outlet, UPS and midspan for PTZ Camerafor Cameras for Security Network - (RD-C-3/1)-Z4-C031-CCTV | 2027-01-27 → 2027-06-20 (+144d) | 2027-01-28 → 2027-06-22 (+145d) | 2d → 2.01d |  |  | resources Skilled labor [13.12 h]; Unskilled Labor [52.32 h]; Electrician [26.08 h]; Equipment Opreator [26.08 h]; Excavator-Poclain [6.53 h]; Dump Truck [6.53 h]; Outdoor ready IP66-rated midspan for PTZ Camera (The outdoor- ready midspan should be IP66/IP67- and NEMA 4X-rated [1 nr]; 1.2KVA Industrial type UPS located at FEC remote poles [2 nr] → Skilled labor [13.12 h]; Unskilled Labor [52.32 h]; Electrician [26.08 h]; Equipment Opreator [26.08 h]; Excavator-Poclain [6.56 h]; Dump Truck [6.56 h]; Outdoor ready IP66-rated midspan for PTZ Camera (The outdoor- ready midspan should be IP66/IP67- and NEMA 4X-rated [1 nr]; 1.2KVA Industrial type UPS located at FEC remote poles [2 nr] |
| RHD4CZ4RA02CCTV4200 | Short Range Wireless PoP wireless Bridgefor CCTV Poles for Security Network - (RD-C-3/1)-Z4-C031-CCTV | 2027-01-30 → 2027-06-22 (+143d) | 2027-01-31 → 2027-06-23 (+143d) |  |  |  | resources Skilled labor [10.88 h]; Unskilled Labor [21.76 h]; Electrician [10.88 h]; Equipment Opreator [21.76 h]; Excavator-Poclain [5.45 h]; Dump Truck [5.45 h]; Short Range wireless point to point wireless bridge [4 nr] → Skilled labor [10.88 h]; Unskilled Labor [21.76 h]; Electrician [10.88 h]; Equipment Opreator [21.76 h]; Excavator-Poclain [5.44 h]; Dump Truck [5.44 h]; Short Range wireless point to point wireless bridge [4 nr] |
| 2963 | **RHD4-02-002-RA02-(CCTV)-CCTV Panels and Components** | 2027-02-01 → 2027-06-24 (+143d) | 2027-02-11 → 2027-07-05 (+144d) |  |  |  |  |
| RHD4CZ4RA02CCTV6100 | Installation for CCTV Panels for Security Network - (RD-C-3/1)-Z4-C031-CCTV | 2027-02-01 → 2027-06-24 (+143d) | 2027-02-11 → 2027-07-05 (+144d) |  |  |  |  |
| 2785 | **RHD4-02-002-Z4-C031** | 2026-08-13 → 2026-06-30 (-44d) | 2027-03-03 → 2027-07-24 (+143d) |  |  |  |  |
| 2964 | **RHD4-02-002-Z4-C031-Road Works - RD** | 2026-08-25 → 2026-06-30 (-56d) | 2027-03-03 → 2027-07-24 (+143d) |  |  |  |  |
| 2965 | **RHD4-02-002-C031-(RD)-Subgrade** | 2026-08-25 → 2026-06-30 (-56d) | 2026-09-07 → 2026-07-13 (-56d) |  |  |  |  |
| RHD4CZ4C031RD1100 | Supply, lay and compaction subgrade compacted thickness 300 mm for Roads - (RD-C-3/1)-Z4-C031-RD | 2026-08-25 → 2026-06-30 A (-56d) | 2026-09-07 → 2026-07-13 A (-56d) |  | 0% → 100% |  |  |
| 2966 | **RHD4-02-002-C031-(RD)-Aggregate Base Course** | 2026-09-08 → 2027-02-28 (+173d) | 2026-09-09 → 2027-03-01 (+173d) |  |  |  |  |
| RHD4CZ4C031RD2100 | Supply, lay and compaction Aggregate base course compacted thickness 300 mmfor Roads - (RD-C-3/1)-Z4-C031-RD | 2026-09-08 → 2027-02-28 (+173d) | 2026-09-09 → 2027-03-01 (+173d) |  |  |  |  |
| 2967 | **RHD4-02-002-C031-(RD)-Bituminous base course Two Layers, including (MC1)&(RC2)** | 2026-09-10 → 2027-03-02 (+173d) | 2027-02-17 → 2027-07-11 (+144d) |  |  |  |  |
| RHD4CZ4C031RD3100 | Supply, lay and Asphaltic base course including Prime Coat (MC1) for 1st Layer - (RD-C-3/1)-Z4-C031-RD | 2026-09-10 → 2027-03-02 (+173d) | 2026-09-12 → 2027-03-03 (+172d) |  |  |  | resources Skilled labor [6.53 h]; Unskilled Labor [39.21 h]; Equipment Opreator [98.01 h]; Bobcat [6.53 h]; Roller compactor [6.53 h]; Asphalt Paver [6.53 h]; Rubber Compactor [13.07 h]; MC1/RC2 Sprinkler [6.53 h]; Dump Truck [58.81 h]; Bituminous base course (Grading I - Class A), including Prime coat (MC1) & tack coate (RC2) [239.06 m3] → Skilled labor [6.53 h]; Unskilled Labor [39.2 h]; Equipment Opreator [98.01 h]; Bobcat [6.53 h]; Roller compactor [6.53 h]; Asphalt Paver [6.53 h]; Rubber Compactor [13.07 h]; MC1/RC2 Sprinkler [6.53 h]; Dump Truck [58.81 h]; Bituminous base course (Grading I - Class A), including Prime coat (MC1) & tack coate (RC2) [239.06 m3] |
| RHD4CZ4C031RD3200 | Supply, lay and Asphaltic base course including Tack Coat (RC2) for 2nd Layer - (RD-C-3/1)-Z4-C031-RD | 2027-02-16 → 2027-07-10 (+144d) | 2027-02-17 → 2027-07-11 (+144d) |  |  |  | resources Skilled labor [6.53 h]; Unskilled Labor [39.21 h]; Equipment Opreator [98.01 h]; Bobcat [6.53 h]; Roller compactor [6.53 h]; Asphalt Paver [6.53 h]; Rubber Compactor [13.07 h]; MC1/RC2 Sprinkler [6.53 h]; Dump Truck [58.81 h]; Bituminous base course (Grading I - Class A), including Prime coat (MC1) & tack coate (RC2) [239.06 m3] → Skilled labor [6.53 h]; Unskilled Labor [39.2 h]; Equipment Opreator [98.01 h]; Bobcat [6.53 h]; Roller compactor [6.53 h]; Asphalt Paver [6.53 h]; Rubber Compactor [13.07 h]; MC1/RC2 Sprinkler [6.53 h]; Dump Truck [58.81 h]; Bituminous base course (Grading I - Class A), including Prime coat (MC1) & tack coate (RC2) [239.06 m3] |
| 2969 | **RHD4-02-002-C031-(RD)-Precast Concrete Curb** | 2027-02-18 → 2027-07-12 (+144d) | 2027-02-23 → 2027-07-15 (+142d) |  |  |  |  |
| RHD4CZ4C031RD5100 | Supply and installation Precast Concrete Kerb for Roads - (RD-C-3/1)-Z4-C031-RD | 2027-02-18 → 2027-07-12 (+144d) | 2027-02-23 → 2027-07-15 (+142d) |  |  |  |  |
| 2972 | **RHD4-02-002-C031-(RD)-Traffic Signage** | 2027-02-24 → 2027-07-17 (+143d) | 2027-03-02 → 2027-07-22 (+142d) |  |  |  |  |
| RHD4CZ4C031RD8100 | Installation of Traffic Signage for Road Network - (RD-C-3/1)-Z4-C031-RD | 2027-02-24 → 2027-07-17 (+143d) | 2027-03-02 → 2027-07-22 (+142d) |  |  |  |  |
| 2968 | **RHD4-02-002-C031-(RD)-Bituminous concrete wearing course including tack coat (RC2)** | 2027-02-24 → 2027-07-17 (+143d) | 2027-02-25 → 2027-07-18 (+143d) |  |  |  |  |
| RHD4CZ4C031RD4100 | Supply, lay and compaction Asphaltic wearing course including tack Coat (RC2)for Road Network - (RD-C-3/1)-Z4-C031-RD | 2027-02-24 → 2027-07-17 (+143d) | 2027-02-25 → 2027-07-18 (+143d) |  |  |  |  |
| 2971 | **RHD4-02-002-C031-(RD)-Pavement Marking** | 2027-02-27 → 2027-07-19 (+142d) | 2027-03-03 → 2027-07-24 (+143d) |  |  |  |  |
| RHD4CZ4C031RD7100 | Pavement Markings for Road Network - (RD-C-3/1)-Z4-C031-RD | 2027-02-27 → 2027-07-19 (+142d) | 2027-03-03 → 2027-07-24 (+143d) |  |  |  |  |
| 2789 | **RHD4-02-002-Z4-C031-Storm Network - ST** | 2026-08-13 → 2026-08-04 (-9d) | 2026-11-28 → 2027-05-01 (+154d) |  |  |  |  |
| 2430 | **RHD4-02-002-C031-(ST)-MH Works - 2000 mm diameter** | 2026-08-13 → 2027-02-13 (+184d) | 2026-08-24 → 2027-02-24 (+184d) |  |  |  |  |
| RHD4CZ4C031ST3102 | Excavation and PC Blinding works for MH 2000 mm - (RD-C-3/1)-Z4-C031-ST | 2026-08-13 → 2027-02-13 (+184d) | 2026-08-15 → 2027-02-14 (+183d) |  |  | RHD4CZ4A013ST3100, RHD4CZ5L016ST2500, RHD4CZ6A02ST1500, RHD4CZ5L016ST3501, RHD4PRSHLSTAGTC1200 → RHD4CZ4A013ST3100, RHD4CZ5L016ST2500, RHD4CZ6A02ST1500, RHD4CZ5L016ST3501 |  |
| RHD4CZ4C031ST3202 | Installation of Base for MH 2000 mm - (RD-C-3/1)-Z4-C031-ST | 2026-08-16 → 2027-02-15 (+183d) | 2026-08-17 → 2027-02-16 (+183d) |  |  |  |  |
| RHD4CZ4C031ST3302 | MH Ring and C.Slab works and Backfilling works for MH 2000 mm - (RD-C-3/1)-Z4-C031-ST | 2026-08-18 → 2027-02-17 (+183d) | 2026-08-19 → 2027-02-18 (+183d) |  |  |  |  |
| RHD4CZ4C031ST3402 | Steel Cover for MH 2000 mm - (RD-C-3/1)-Z4-C031-ST | 2026-08-20 → 2027-02-20 (+184d) | 2026-08-22 → 2027-02-21 (+183d) |  |  |  |  |
| RHD4CZ4C031ST3502 | Finishing, Benching, Testing works for MH 2000 mm - (RD-C-3/1)-Z4-C031-ST | 2026-08-23 → 2027-02-23 (+184d) | 2026-08-24 → 2027-02-24 (+184d) |  |  |  |  |
| 2427 | **RHD4-02-002-C031-(ST)-UPVC Pipes - 400 mm diameter** |  | 2026-08-26 → 2027-02-27 (+185d) |  |  |  |  |
| RHD4CZ4C031ST2101 | Excavation works for UPVC Pipe Line 400 mm - (RD-C-3/1)-Z4-C031-ST | 2026-08-16 A | 2026-08-17 → 2026-09-22 A (+36d) |  | 0% → 100% |  |  |
| RHD4CZ4C031ST2201 | Bedding works for UPVC Pipe Line 400 mm - (RD-C-3/1)-Z4-C031-ST | 2026-08-18 → 2026-10-01 A (+44d) | 2026-08-19 → 2026-10-03 A (+45d) |  | 0% → 100% |  |  |
| RHD4CZ4C031ST2301 | Installing for UPVC Pipe Line 400 mm - (RD-C-3/1)-Z4-C031-ST | 2026-08-20 → 2027-02-15 (+179d) | 2026-08-22 → 2027-02-16 (+178d) |  |  |  |  |
| RHD4CZ4C031ST2401 | Primary Test for UPVC Pipe Line 400 mm - (RD-C-3/1)-Z4-C031-ST | 2026-08-23 → 2027-02-17 (+178d) | 2026-08-24 → 2027-02-18 (+178d) |  |  |  |  |
| RHD4CZ4C031ST2501 | Backfilling and warning tape works for UPVC Pipe Line 400 mm - (RD-C-3/1)-Z4-C031-ST | 2026-08-25 → 2027-02-25 (+184d) | 2026-08-26 → 2027-02-27 (+185d) |  |  |  |  |
| 2420 | **RHD4-02-002-C031-(ST)-GRP Pipes - 1200 mm diameter** | 2026-08-18 → 2027-02-15 (+181d) | 2026-08-29 → 2027-03-01 (+184d) |  |  |  |  |
| RHD4CZ4C031ST1108 | Excavation works for GRP Pipe Line 1200 mm - (RD-C-3/1)-Z4-C031-ST | 2026-08-18 → 2027-02-15 (+181d) | 2026-08-19 → 2027-02-16 (+181d) |  |  |  |  |
| RHD4CZ4C031ST1208 | Bedding works for GRP Pipe Line 1200 mm - (RD-C-3/1)-Z4-C031-ST | 2026-08-20 → 2027-02-17 (+181d) | 2026-08-22 → 2027-02-18 (+180d) |  |  |  |  |
| RHD4CZ4C031ST1308 | Installing for GRP Pipe Line 1200 mm - (RD-C-3/1)-Z4-C031-ST | 2026-08-23 → 2027-02-20 (+181d) | 2026-08-24 → 2027-02-21 (+181d) |  |  |  |  |
| RHD4CZ4C031ST1408 | Primary Test for GRP Pipe Line 1200 mm - (RD-C-3/1)-Z4-C031-ST | 2026-08-25 → 2027-02-23 (+182d) | 2026-08-26 → 2027-02-24 (+182d) |  |  |  |  |
| RHD4CZ4C031ST1508 | Backfilling and warning tape works for GRP Pipe Line 1200 mm - (RD-C-3/1)-Z4-C031-ST | 2026-08-27 → 2027-02-28 (+185d) | 2026-08-29 → 2027-03-01 (+184d) |  |  |  |  |
| 2415 | **RHD4-02-002-C031-(ST)-GRP Pipes - 700 mm diameter** |  | 2026-08-31 → 2027-03-03 (+184d) |  |  |  |  |
| RHD4CZ4C031ST1103 | Excavation works for GRP Pipe Line 700 mm - (RD-C-3/1)-Z4-C031-ST | 2026-08-20 A | 2026-08-22 → 2026-09-20 A (+29d) |  | 0% → 100% |  |  |
| RHD4CZ4C031ST1203 | Bedding works for GRP Pipe Line 700 mm - (RD-C-3/1)-Z4-C031-ST | 2026-08-23 → 2027-02-17 (+178d) | 2026-08-24 → 2027-02-18 (+178d) |  |  |  |  |
| RHD4CZ4C031ST1303 | Installing for GRP Pipe Line 700 mm - (RD-C-3/1)-Z4-C031-ST | 2026-08-25 → 2027-02-20 (+179d) | 2026-08-26 → 2027-02-21 (+179d) |  |  |  | resources Unskilled Labor [1.52 h]; Plumber [0.76 h]; GRP (700mm Diameter) - ST - Depth less than 1.5 m [12.96 m]; GRP (700mm Diameter) - ST - Depth: 1.51m - 2.5m → Unskilled Labor [1.52 h]; Plumber [0.8 h]; GRP (700mm Diameter) - ST - Depth less than 1.5 m [12.96 m]; GRP (700mm Diameter) - ST - Depth: 1.51m - 2.5m |
| RHD4CZ4C031ST1403 | Primary Test for GRP Pipe Line 700 mm - (RD-C-3/1)-Z4-C031-ST | 2026-08-27 → 2027-02-23 (+180d) | 2026-08-29 → 2027-02-24 (+179d) |  |  |  | resources Unskilled Labor [0.76 h]; Plumber [0.76 h]; Equipment Opreator [0.76 h]; Water Truck [0.76 h]; GRP (700mm Diameter) - ST - Depth less than 1.5 m [5.76 m]; GRP (700mm Diameter) - ST - Depth: 1.51m - 2.5m → Unskilled Labor [0.8 h]; Plumber [0.8 h]; Equipment Opreator [0.8 h]; Water Truck [0.8 h]; GRP (700mm Diameter) - ST - Depth less than 1.5 m [5.76 m]; GRP (700mm Diameter) - ST - Depth: 1.51m - 2.5m |
| RHD4CZ4C031ST1503 | Backfilling and warning tape works for GRP Pipe Line 700 mm - (RD-C-3/1)-Z4-C031-ST | 2026-08-30 → 2027-03-02 (+184d) | 2026-08-31 → 2027-03-03 (+184d) |  |  |  |  |
| 2414 | **RHD4-02-002-C031-(ST)-GRP Pipes - 600 mm diameter** | 2026-09-01 → 2026-08-04 (-28d) | 2026-09-12 → 2027-03-06 (+175d) |  |  |  |  |
| RHD4CZ4C031ST1102 | Excavation works for GRP Pipe Line 600 mm - (RD-C-3/1)-Z4-C031-ST | 2026-09-01 → 2026-08-04 A (-28d) | 2026-09-02 → 2026-09-19 A (+17d) |  | 0% → 100% |  |  |
| RHD4CZ4C031ST1202 | Bedding works for GRP Pipe Line 600 mm - (RD-C-3/1)-Z4-C031-ST | 2026-09-03 → 2026-08-05 A (-29d) | 2026-09-05 → 2026-09-20 A (+15d) |  | 0% → 100% |  |  |
| RHD4CZ4C031ST1302 | Installing for GRP Pipe Line 600 mm - (RD-C-3/1)-Z4-C031-ST | 2026-09-06 → 2026-08-06 A (-31d) | 2026-09-07 → 2026-09-21 A (+14d) |  | 0% → 100% |  |  |
| RHD4CZ4C031ST1502 | Backfilling and warning tape works for GRP Pipe Line 600 mm - (RD-C-3/1)-Z4-C031-ST | 2026-09-10 → 2026-08-08 A (-33d) | 2026-09-12 → 2026-10-01 A (+19d) |  | 0% → 100% |  |  |
| RHD4CZ4C031ST1402 | Primary Test for GRP Pipe Line 600 mm - (RD-C-3/1)-Z4-C031-ST | 2026-09-08 → 2027-03-04 (+177d) | 2026-09-09 → 2027-03-06 (+178d) |  |  |  |  |
| 2413 | **RHD4-02-002-C031-(ST)-GRP Pipes - 500 mm diameter** | 2026-09-13 → 2026-08-04 (-40d) | 2026-09-24 → 2027-03-14 (+171d) |  |  |  |  |
| RHD4CZ4C031ST1101 | Excavation works for GRP Pipe Line 500 mm - (RD-C-3/1)-Z4-C031-ST | 2026-09-13 → 2026-08-04 A (-40d) | 2026-09-14 → 2026-09-19 A (+5d) |  | 0% → 100% |  |  |
| RHD4CZ4C031ST1201 | Bedding works for GRP Pipe Line 500 mm - (RD-C-3/1)-Z4-C031-ST | 2026-09-15 → 2026-08-05 A (-41d) | 2026-09-16 → 2026-09-20 A (+4d) |  | 0% → 100% |  | resources Skilled labor [12.41 h]; Unskilled Labor [24.83 h]; Equipment Opreator [24.83 h]; Excavator-Poclain [12.41 h]; Dump Truck [12.41 h]; GRP (500mm Diameter) - ST - Depth less than 1.5 m [15.25 m]; GRP (500mm Diameter) - ST - Depth: 1.51m - 2.5m → Skilled labor [12.41 h]; Unskilled Labor [24.8 h]; Equipment Opreator [24.8 h]; Excavator-Poclain [12.41 h]; Dump Truck [12.41 h]; GRP (500mm Diameter) - ST - Depth less than 1.5 m [15.25 m]; GRP (500mm Diameter) - ST - Depth: 1.51m - 2.5m |
| RHD4CZ4C031ST1301 | Installing for GRP Pipe Line 500 mm - (RD-C-3/1)-Z4-C031-ST | 2026-09-17 → 2026-08-06 A (-42d) | 2026-09-19 → 2026-09-21 A (+2d) |  | 0% → 100% |  |  |
| RHD4CZ4C031ST1501 | Backfilling and warning tape works for GRP Pipe Line 500 mm - (RD-C-3/1)-Z4-C031-ST | 2026-09-22 → 2026-08-08 A (-45d) | 2026-09-24 → 2027-03-14 (+171d) |  | 0% → 26% |  |  |
| RHD4CZ4C031ST1401 | Primary Test for GRP Pipe Line 500 mm - (RD-C-3/1)-Z4-C031-ST | 2026-09-20 → 2027-03-07 (+168d) | 2026-09-21 → 2027-03-08 (+168d) |  |  |  |  |
| 2806 | **RHD4-02-002-C031-(ST)-MH Works - 1200 mm diameter** | 2026-09-26 → 2026-08-04 (-53d) | 2026-11-04 → 2027-04-14 (+161d) |  |  |  |  |
| RHD4CZ4C031ST3100 | Excavation and PC Blinding works for MH 1200 mm - (RD-C-3/1)-Z4-C031-ST | 2026-09-26 → 2026-08-04 A (-53d) | 2026-10-03 → 2027-03-17 (+165d) |  | 0% → 80% |  |  |
| RHD4CZ4C031ST3200 | Installation of Base for MH 1200 mm - (RD-C-3/1)-Z4-C031-ST | 2026-10-04 → 2026-09-13 A (-21d) | 2026-10-11 → 2027-03-21 (+161d) |  | 0% → 53% |  | resources Skilled labor [67.19 h]; Unskilled Labor [67.19 h]; Equipment Opreator [26.9 h]; Boom Truck [13.4 h]; Concrete Mixer Truck [13.4 h]; MH (1200mm Diameter) - ST - depth less than 1.5 [0.5 nr]; MH (1200mm Diameter) - ST - depth 1.50 - 2.5m [4.25 nr] → Skilled labor [67.2 h]; Unskilled Labor [67.2 h]; Equipment Opreator [26.9 h]; Boom Truck [13.4 h]; Concrete Mixer Truck [13.4 h]; MH (1200mm Diameter) - ST - depth less than 1.5 [0.5 nr]; MH (1200mm Diameter) - ST - depth 1.50 - 2.5m [4.25 nr] |
| RHD4CZ4C031ST3300 | MH Ring and C.Slab works and Backfilling works for MH 1200 mm - (RD-C-3/1)-Z4-C031-ST | 2026-10-12 → 2027-03-22 (+161d) | 2026-10-19 → 2027-03-29 (+161d) |  |  |  | resources Skilled labor [67.19 h]; Unskilled Labor [67.19 h]; Equipment Opreator [47.05 h]; Boom Truck [26.9 h]; Concrete Mixer Truck [20.15 h]; MH (1200mm Diameter) - ST - depth less than 1.5 [0.7 nr]; MH (1200mm Diameter) - ST - depth 1.50 - 2.5m [5.95 nr] → Skilled labor [67.2 h]; Unskilled Labor [67.2 h]; Equipment Opreator [47.05 h]; Boom Truck [26.9 h]; Concrete Mixer Truck [20.15 h]; MH (1200mm Diameter) - ST - depth less than 1.5 [0.7 nr]; MH (1200mm Diameter) - ST - depth 1.50 - 2.5m [5.95 nr] |
| RHD4CZ4C031ST3400 | Steel Cover for MH 1200 mm - (RD-C-3/1)-Z4-C031-ST | 2026-10-20 → 2027-03-30 (+161d) | 2026-10-27 → 2027-04-06 (+161d) |  |  |  |  |
| RHD4CZ4C031ST3500 | Finishing, Benching, Testing works for MH 1200 mm - (RD-C-3/1)-Z4-C031-ST | 2026-10-28 → 2027-04-07 (+161d) | 2026-11-04 → 2027-04-14 (+161d) |  |  |  |  |
| 2807 | **RHD4-02-002-C031-(ST)-MH Works - 1500 mm diameter** | 2026-10-20 → 2026-09-19 (-31d) | 2026-11-28 → 2027-05-01 (+154d) |  |  |  |  |
| RHD4CZ4C031ST3101 | Excavation and PC Blinding works for MH 1500 mm - (RD-C-3/1)-Z4-C031-ST | 2026-10-20 → 2026-09-19 A (-31d) | 2026-10-21 → 2027-03-31 (+161d) |  | 0% → 25% |  |  |
| RHD4CZ4C031ST3201 | Installation of Base for MH 1500 mm - (RD-C-3/1)-Z4-C031-ST | 2026-10-22 → 2026-09-21 A (-31d) | 2026-10-24 → 2027-04-03 (+161d) |  | 0% → 25% |  |  |

| ID | Task | Start | Finish | Complete | Other |
| --- | --- | --- | --- | --- | --- |
| RHD4CZ4C031ST3301 | MH Ring and C.Slab works and Backfilling works for MH 1500 mm - (RD-C-3/1)-Z4-C031-ST | 2026-10-25 → 2027-04-04 (+161d) | 2026-10-26 → 2027-04-05 (+161d) |  |  |
| RHD4CZ4C031ST3401 | Steel Cover for MH 1500 mm - (RD-C-3/1)-Z4-C031-ST | 2026-11-24 → 2027-04-22 (+149d) | 2026-11-25 → 2027-04-24 (+150d) |  |  |
| RHD4CZ4C031ST3501 | Finishing, Benching, Testing works for MH 1500 mm - (RD-C-3/1)-Z4-C031-ST | 2026-11-26 → 2027-04-29 (+154d) | 2026-11-28 → 2027-05-01 (+154d) |  |  |
| 2795 | **RHD4-02-002-C031-(ST)-GRP Pipes - 900 mm diameter** | 2026-10-27 → 2027-04-06 (+161d) | 2026-11-07 → 2027-04-17 (+161d) |  |  |
| RHD4CZ4C031ST1105 | Excavation works for GRP Pipe Line 900 mm - (RD-C-3/1)-Z4-C031-ST | 2026-10-27 → 2027-04-06 (+161d) | 2026-10-28 → 2027-04-07 (+161d) |  |  |
| RHD4CZ4C031ST1205 | Bedding works for GRP Pipe Line 900 mm - (RD-C-3/1)-Z4-C031-ST | 2026-10-29 → 2027-04-08 (+161d) | 2026-10-31 → 2027-04-10 (+161d) |  |  |
| RHD4CZ4C031ST1305 | Installing for GRP Pipe Line 900 mm - (RD-C-3/1)-Z4-C031-ST | 2026-11-01 → 2027-04-11 (+161d) | 2026-11-02 → 2027-04-12 (+161d) |  |  |
| RHD4CZ4C031ST1405 | Primary Test for GRP Pipe Line 900 mm - (RD-C-3/1)-Z4-C031-ST | 2026-11-03 → 2027-04-13 (+161d) | 2026-11-04 → 2027-04-14 (+161d) |  |  |
| RHD4CZ4C031ST1505 | Backfilling and warning tape works for GRP Pipe Line 900 mm - (RD-C-3/1)-Z4-C031-ST | 2026-11-05 → 2027-04-15 (+161d) | 2026-11-07 → 2027-04-17 (+161d) |  |  |
| 2790 | **RHD4-02-002-C031-(ST)-GRP Pipes - 400 mm diameter** | 2026-10-29 → 2026-08-04 (-86d) | 2026-11-23 → 2027-04-21 (+149d) |  |  |
| RHD4CZ4C031ST1100 | Excavation works for GRP Pipe Line 400 mm - (RD-C-3/1)-Z4-C031-ST | 2026-10-29 → 2026-08-04 A (-86d) | 2026-11-02 → 2027-04-10 (+159d) | 0% → 57% |  |
| RHD4CZ4C031ST1200 | Bedding works for GRP Pipe Line 400 mm - (RD-C-3/1)-Z4-C031-ST | 2026-11-03 → 2026-08-05 A (-90d) | 2026-11-05 → 2027-04-13 (+159d) | 0% → 69% |  |
| RHD4CZ4C031ST1300 | Installing for GRP Pipe Line 400 mm - (RD-C-3/1)-Z4-C031-ST | 2026-11-07 → 2026-08-06 A (-93d) | 2026-11-11 → 2027-04-15 (+155d) | 0% → 40% | resources Unskilled Labor [97.47 h]; Plumber [48.79 h]; GRP (400mm Diameter) - ST - Depth less than 1.5 m [334.22 m]; GRP (400mm Diameter) - ST - Depth: 1.51m - 2.5 m → Unskilled Labor [97.47 h]; Plumber [48.8 h]; GRP (400mm Diameter) - ST - Depth less than 1.5 m [334.22 m]; GRP (400mm Diameter) - ST - Depth: 1.51m - 2.5 m |
| RHD4CZ4C031ST1500 | Backfilling and warning tape works for GRP Pipe Line 400 mm - (RD-C-3/1)-Z4-C031-ST | 2026-11-16 → 2026-08-08 A (-100d) | 2026-11-23 → 2027-04-21 (+149d) | 0% → 20% |  |
| RHD4CZ4C031ST1400 | Primary Test for GRP Pipe Line 400 mm - (RD-C-3/1)-Z4-C031-ST | 2026-11-12 → 2027-04-17 (+156d) | 2026-11-15 → 2027-04-19 (+155d) |  |  |
| 2804 | **RHD4-02-002-C031-(ST)-UPVC Pipes - 300 mm diameter** | 2026-10-27 → 2026-09-19 (-38d) | 2026-11-23 → 2027-04-28 (+156d) |  |  |
| RHD4CZ4C031ST2100 | Excavation works for UPVC Pipe Line 300 mm - (RD-C-3/1)-Z4-C031-ST | 2026-10-27 → 2026-09-19 A (-38d) | 2026-10-31 → 2027-04-10 (+161d) | 0% → 79% | resources Skilled labor [37.57 h]; Unskilled Labor [37.57 h]; Equipment Opreator [45.09 h]; Excavator-Poclain [37.57 h]; Dump Truck [7.51 h]; UPVC (300mm Diameter) - ST - Depth less than 1.5 [84.93 m]; UPVC (300mm Diameter) - ST - Depth: 1.51m - 2.5m → Skilled labor [37.6 h]; Unskilled Labor [37.6 h]; Equipment Opreator [45.09 h]; Excavator-Poclain [37.6 h]; Dump Truck [7.51 h]; UPVC (300mm Diameter) - ST - Depth less than 1.5 [84.93 m]; UPVC (300mm Diameter) - ST - Depth: 1.51m - 2.5m |
| RHD4CZ4C031ST2200 | Bedding works for UPVC Pipe Line 300 mm - (RD-C-3/1)-Z4-C031-ST | 2026-11-01 → 2026-09-21 A (-41d) | 2026-11-03 → 2027-04-13 (+161d) | 0% → 3% |  |
| RHD4CZ4C031ST2300 | Installing for UPVC Pipe Line 300 mm - (RD-C-3/1)-Z4-C031-ST | 2026-11-11 → 2026-09-22 A (-50d) | 2026-11-15 → 2027-04-20 (+156d) | 0% → 3% | resources Unskilled Labor [75.14 h]; Plumber [37.57 h]; UPVC (300mm Diameter) - ST - Depth less than 1.5 [382.19 m]; UPVC (300mm Diameter) - ST - Depth: 1.51m - 2.5m → Unskilled Labor [75.14 h]; Plumber [37.6 h]; UPVC (300mm Diameter) - ST - Depth less than 1.5 [382.19 m]; UPVC (300mm Diameter) - ST - Depth: 1.51m - 2.5m |
| RHD4CZ4C031ST2500 | Backfilling and warning tape works for UPVC Pipe Line 300 mm - (RD-C-3/1)-Z4-C031-ST | 2026-11-18 → 2026-09-23 A (-56d) | 2026-11-23 → 2027-04-28 (+156d) | 0% → 3% |  |
| RHD4CZ4C031ST2400 | Primary Test for UPVC Pipe Line 300 mm - (RD-C-3/1)-Z4-C031-ST | 2026-11-16 → 2027-04-21 (+156d) | 2026-11-17 → 2027-04-22 (+156d) |  |  |
| 2812 | **RHD4-02-002-C031-(ST)-Concrete Encasement** | 2026-11-11 → 2027-04-17 (+157d) | 2026-11-15 → 2027-04-20 (+156d) |  |  |
| RHD4CZ4C031ST6100 | Pipe Encasement for Storm Pipelines - (RD-C-3/1)-Z4-C031-ST | 2026-11-11 → 2027-04-17 (+157d) | 2026-11-15 → 2027-04-20 (+156d) |  |  |
| 2813 | **RHD4-02-002-Z4-C031-Catch Basin - ST** | 2026-10-27 → 2026-08-29 (-59d) | 2026-11-24 → 2027-04-29 (+156d) |  |  |
| 2437 | **RHD4-02-002-C031-(ST)-Double Catch Basin Works** | 2026-11-03 → 2026-09-19 (-45d) | 2026-11-14 → 2027-04-21 (+158d) |  |  |
| RHD4CZ4C031ST8100 | Excavation works for Double Catch Basin - (RD-C-3/1)-Z4-C031-ST | 2026-11-03 → 2026-09-19 A (-45d) | 2026-11-04 → 2027-04-12 (+159d) | 0% → 80% |  |
| RHD4CZ4C031ST8200 | PC Blinding, Installation and Pipe connection for Double Catch Basin - (RD-C-3/1)-Z4-C031-ST | 2026-11-05 → 2027-04-13 (+159d) | 2026-11-07 → 2027-04-14 (+158d) |  |  |
| RHD4CZ4C031ST8300 | Rings & C.Slab & Final Backfillfor Double Catch Basin - (RD-C-3/1)-Z4-C031-ST | 2026-11-08 → 2027-04-15 (+158d) | 2026-11-09 → 2027-04-17 (+159d) |  |  |
| RHD4CZ4C031ST8400 | Steel Cover for Double Catch Basin - (RD-C-3/1)-Z4-C031-ST | 2026-11-10 → 2027-04-18 (+159d) | 2026-11-11 → 2027-04-19 (+159d) |  |  |
| RHD4CZ4C031ST8500 | Finishing and Insulation works for Double Catch Basin - (RD-C-3/1)-Z4-C031-ST | 2026-11-12 → 2027-04-20 (+159d) | 2026-11-14 → 2027-04-21 (+158d) |  |  |
| 2814 | **RHD4-02-002-C031-(ST)-Single Catch Basin Works** | 2026-10-27 → 2026-08-29 (-59d) | 2026-11-24 → 2027-04-29 (+156d) |  |  |
| RHD4CZ4C031ST7100 | Excavation works for Single Catch Basin - (RD-C-3/1)-Z4-C031-ST | 2026-10-27 → 2026-08-29 A (-59d) | 2026-10-31 → 2027-04-07 (+158d) | 0% → 67% |  |
| RHD4CZ4C031ST7200 | PC Blinding, Installation and Pipe connection for Single Catch Basin - (RD-C-3/1)-Z4-C031-ST | 2026-11-01 → 2026-08-30 A (-63d) | 2026-11-04 → 2027-04-10 (+157d) | 0% → 67% |  |
| RHD4CZ4C031ST7300 | Rings & C.Slab & Final Backfill for Single Catch Basin - (RD-C-3/1)-Z4-C031-ST | 2026-11-05 → 2026-10-27 A (-9d) | 2026-11-10 → 2027-04-15 (+156d) | 0% → 10% |  |
| RHD4CZ4C031ST7400 | Steel Cover for Single Catch Basin - (RD-C-3/1)-Z4-C031-ST | 2026-11-11 → 2027-04-17 (+157d) | 2026-11-15 → 2027-04-20 (+156d) |  |  |
| RHD4CZ4C031ST7500 | Finishing and Insulation works for Single Catch Basin - (RD-C-3/1)-Z4-C031-ST | 2026-11-16 → 2027-04-21 (+156d) | 2026-11-24 → 2027-04-29 (+156d) |  |  |
| 2875 | **RHD4-02-002-Z4-C031-Potable Network - PT** | 2026-11-24 → 2027-04-29 (+156d) | 2027-01-02 → 2027-05-26 (+144d) |  |  |
| 2879 | **RHD4-02-002-C031-(PT)-HDPE Pipes - 400 mm diameter** | 2026-11-24 → 2027-04-29 (+156d) | 2026-12-05 → 2027-05-10 (+156d) |  |  |
| RHD4CZ4C031PT1103 | Excavation works for HDPE Pipline 400 mm - (RD-C-3/1)-Z4-C031-PT | 2026-11-24 → 2027-04-29 (+156d) | 2026-11-25 → 2027-05-01 (+157d) |  |  |
| RHD4CZ4C031PT1203 | Bedding works for HDPE Pipline 400 mm - (RD-C-3/1)-Z4-C031-PT | 2026-11-26 → 2027-05-02 (+157d) | 2026-11-28 → 2027-05-03 (+156d) |  |  |
| RHD4CZ4C031PT1303 | Installing for HDPE Pipline 400 mm - (RD-C-3/1)-Z4-C031-PT | 2026-11-29 → 2027-05-04 (+156d) | 2026-11-30 → 2027-05-05 (+156d) |  |  |
| RHD4CZ4C031PT1403 | Primary Test for HDPE Pipline 400 mm - (RD-C-3/1)-Z4-C031-PT | 2026-12-01 → 2027-05-06 (+156d) | 2026-12-02 → 2027-05-08 (+157d) |  | resources Skilled labor [5.45 h]; Unskilled Labor [22 h]; Plumber [11.22 h]; Equipment Opreator [22 h]; Excavator-Poclain [5.45 h]; Water Truck [11.22 h]; Dump Truck [5.45 h]; HDPE (400mm Diameter) - PT - Depth: less than 1.5m [36.78 m]; HDPE (400mm Diameter) - PT - Depth: 1.51m - 2.5m [22.99 m]; HDPE (400mm Diameter) - PT - Depth: more than 2.5m → Skilled labor [5.45 h]; Unskilled Labor [22 h]; Plumber [11.2 h]; Equipment Opreator [22 h]; Excavator-Poclain [5.45 h]; Water Truck [11.2 h]; Dump Truck [5.45 h]; HDPE (400mm Diameter) - PT - Depth: less than 1.5m [36.78 m]; HDPE (400mm Diameter) - PT - Depth: 1.51m - 2.5m [22.99 m]; HDPE (400mm Diameter) - PT - Depth: more than 2.5m |
| RHD4CZ4C031PT1503 | Backfilling and warning tape works for HDPE Pipline 400 mm - (RD-C-3/1)-Z4-C031-PT | 2026-12-03 → 2027-05-09 (+157d) | 2026-12-05 → 2027-05-10 (+156d) |  |  |
| 1751 | **RHD4-02-002-C031-(PT)-Air Valve Chambers** | 2026-11-26 → 2027-05-02 (+157d) | 2026-12-05 → 2027-05-10 (+156d) |  |  |
| RHD4CZ4C031PT2102 | Excavation and Bedding for Air Valve Chambers for Potable Water Network - (RD-C-3/1)-Z4-C031-PT | 2026-11-26 → 2027-05-02 (+157d) | 2026-11-28 → 2027-05-03 (+156d) |  |  |
| RHD4CZ4C031PT2202 | PC works for Air Valve Chambers for Potable Water Network - (RD-C-3/1)-Z4-C031-PT | 2026-11-29 → 2027-05-04 (+156d) | 2026-11-30 → 2027-05-05 (+156d) |  |  |
| RHD4CZ4C031PT2302 | Installation for Air Valve Chambers for Potable Water Network - (RD-C-3/1)-Z4-C031-PT | 2026-12-01 → 2027-05-06 (+156d) | 2026-12-02 → 2027-05-08 (+157d) |  |  |
| RHD4CZ4C031PT2402 | Backfilling works for Air Valve Chambers for Potable Water Network - (RD-C-3/1)-Z4-C031-PT | 2026-12-03 → 2027-05-09 (+157d) | 2026-12-05 → 2027-05-10 (+156d) |  |  |
| 1752 | **RHD4-02-002-C031-(PT)-Air Valves** | 2026-12-03 → 2027-05-09 (+157d) | 2026-12-07 → 2027-05-12 (+156d) |  |  |
| RHD4CZ4C031PT3103 | Installation for Air Valves for Potable Water Network - (RD-C-3/1)-Z4-C031-PT | 2026-12-03 → 2027-05-09 (+157d) | 2026-12-05 → 2027-05-10 (+156d) |  |  |
| RHD4CZ4C031PT3203 | Stem and Service box for Air Valves for Potable Water Network - (RD-C-3/1)-Z4-C031-PT | 2026-12-06 → 2027-05-11 (+156d) | 2026-12-07 → 2027-05-12 (+156d) |  |  |
| 2883 | **RHD4-02-002-C031-(PT)-Butterfly Valves** | 2026-12-06 → 2027-05-11 (+156d) | 2027-01-02 → 2027-05-25 (+143d) |  |  |
| RHD4CZ4C031PT3101 | Installation for Butterfly Valves for Potable Water Network - (RD-C-3/1)-Z4-C031-PT | 2026-12-06 → 2027-05-11 (+156d) | 2026-12-07 → 2027-05-12 (+156d) |  |  |
| RHD4CZ4C031PT3201 | Stem and Service box for Butterfly Valves for Potable Water Network - (RD-C-3/1)-Z4-C031-PT | 2026-12-31 → 2027-05-24 (+144d) | 2027-01-02 → 2027-05-25 (+143d) |  |  |
| 2888 | **RHD4-02-002-C031-(PT)-Fire Hydrant** | 2026-12-06 → 2027-05-11 (+156d) | 2026-12-16 → 2027-05-26 (+161d) |  |  |
| RHD4CZ4C031PT4100 | Excavation and Bedding and Pipe Installation for Fire Hydrant - (RD-C-3/1)-Z4-C031-PT | 2026-12-06 → 2027-05-11 (+156d) | 2026-12-07 → 2027-05-12 (+156d) |  |  |
| RHD4CZ4C031PT4200 | Valve Installation for Fire Hydrant - (RD-C-3/1)-Z4-C031-PT | 2026-12-08 → 2027-05-13 (+156d) | 2026-12-09 → 2027-05-19 (+161d) |  |  |
| RHD4CZ4C031PT4300 | Stem for Fire Hydrant - (RD-C-3/1)-Z4-C031-PT | 2026-12-10 → 2027-05-20 (+161d) | 2026-12-12 → 2027-05-22 (+161d) |  |  |
| RHD4CZ4C031PT4400 | Fire Installation for Fire Hydrant - (RD-C-3/1)-Z4-C031-PT | 2026-12-13 → 2027-05-23 (+161d) | 2026-12-14 → 2027-05-24 (+161d) |  |  |
| RHD4CZ4C031PT4500 | Protection Barriers for Fire Hydrant - (RD-C-3/1)-Z4-C031-PT | 2026-12-15 → 2027-05-25 (+161d) | 2026-12-16 → 2027-05-26 (+161d) |  |  |
| 2882 | **RHD4-02-002-C031-(PT)-Butterfly Valve Chamber** | 2026-11-29 → 2027-05-04 (+156d) | 2026-12-07 → 2027-05-12 (+156d) |  |  |
| RHD4CZ4C031PT2100 | Excavation and Bedding for Butterfly Valve Chamber for Potable Water Network - (RD-C-3/1)-Z4-C031-PT | 2026-11-29 → 2027-05-04 (+156d) | 2026-11-30 → 2027-05-05 (+156d) |  |  |
| RHD4CZ4C031PT2200 | PC works for Butterfly Valve Chamber for Potable Water Network - (RD-C-3/1)-Z4-C031-PT | 2026-12-01 → 2027-05-06 (+156d) | 2026-12-02 → 2027-05-08 (+157d) |  |  |
| RHD4CZ4C031PT2300 | Installation for Butterfly Valve Chamber for Potable Water Network - (RD-C-3/1)-Z4-C031-PT | 2026-12-03 → 2027-05-09 (+157d) | 2026-12-05 → 2027-05-10 (+156d) |  |  |
| RHD4CZ4C031PT2400 | Backfilling works for Butterfly Valve Chamber for Potable Water Network - (RD-C-3/1)-Z4-C031-PT | 2026-12-06 → 2027-05-11 (+156d) | 2026-12-07 → 2027-05-12 (+156d) |  |  |
| 2924 | **RHD4-02-002-Z4-C031-Medium Voltage Network - MV** | 2026-11-16 → 2027-04-21 (+156d) | 2026-11-29 → 2027-05-04 (+156d) |  |  |
| 2925 | **RHD4-02-002-C031-(MV)-Medium Voltage cable trench** | 2026-11-16 → 2027-04-21 (+156d) | 2026-11-26 → 2027-05-02 (+157d) |  |  |
| RHD4CZ4C031MV1100 | Excavation for Medium Voltage Trench - (RD-C-3/1)-Z4-C031-MV | 2026-11-16 → 2027-04-21 (+156d) | 2026-11-24 → 2027-04-29 (+156d) |  | resources Skilled labor [21.56 h]; Unskilled Labor [43.13 h]; Equipment Opreator [64.69 h]; Excavator-Poclain [21.56 h]; Dump Truck [43.13 h]; Excavation for Trench size 60cm wide and 80cm deep ( for 2 cables) [138.51 m3] → Skilled labor [21.6 h]; Unskilled Labor [43.13 h]; Equipment Opreator [64.69 h]; Excavator-Poclain [21.6 h]; Dump Truck [43.13 h]; Excavation for Trench size 60cm wide and 80cm deep ( for 2 cables) [138.51 m3] |
| RHD4CZ4C031MV1200 | Trench Backfilling for Medium Voltage Network - (RD-C-3/1)-Z4-C031-MV | 2026-11-25 → 2027-05-01 (+157d) | 2026-11-26 → 2027-05-02 (+157d) |  | resources Skilled labor [21.56 h]; Unskilled Labor [21.56 h]; Equipment Opreator [43.13 h]; Dump Truck [43.13 h]; Excavation for Trench size 60cm wide and 80cm deep ( for 2 cables) [59.36 m3] → Skilled labor [21.6 h]; Unskilled Labor [21.6 h]; Equipment Opreator [43.13 h]; Dump Truck [43.13 h]; Excavation for Trench size 60cm wide and 80cm deep ( for 2 cables) [59.36 m3] |
| 2926 | **RHD4-02-002-C031-(MV)-Medium Voltage duct banks** | 2026-11-16 → 2027-04-21 (+156d) | 2026-11-25 → 2027-05-01 (+157d) |  |  |

| ID | Task | Start | Finish | Other |
| --- | --- | --- | --- | --- |
| RHD4CZ4C031MV2100 | Excavation of Duct Banks for Medium Voltage Network - (RD-C-3/1)-Z4-C031-MV | 2026-11-16 → 2027-04-21 (+156d) | 2026-11-17 → 2027-04-22 (+156d) | resources Unskilled Labor [20.04 h]; Equipment Opreator [40.08 h]; Excavator-Poclain [20.04 h]; Dump Truck [20.04 h]; Duct bank for MV cables UPVC (4xø150mm) [2.76 m] → Unskilled Labor [20 h]; Equipment Opreator [40.08 h]; Excavator-Poclain [20 h]; Dump Truck [20 h]; Duct bank for MV cables UPVC (4xø150mm) [2.76 m] |
| RHD4CZ4C031MV2200 | Installation of Duct Banks for Medium Voltage Network - (RD-C-3/1)-Z4-C031-MV | 2026-11-18 → 2027-04-24 (+157d) | 2026-11-21 → 2027-04-26 (+156d) |  |
| RHD4CZ4C031MV2300 | Pouring of Duct Banks for Medium Voltage Network - (RD-C-3/1)-Z4-C031-MV | 2026-11-22 → 2027-04-27 (+156d) | 2026-11-23 → 2027-04-28 (+156d) | resources Unskilled Labor [20.04 h]; Equipment Opreator [40.08 h]; Excavator-Poclain [20.04 h]; Dump Truck [20.04 h]; Duct bank for MV cables UPVC (4xø150mm) [17.93 m] → Unskilled Labor [20 h]; Equipment Opreator [40.08 h]; Excavator-Poclain [20 h]; Dump Truck [20 h]; Duct bank for MV cables UPVC (4xø150mm) [17.93 m] |
| RHD4CZ4C031MV2400 | Backfilling of Duct Banks for Medium Voltage Network - (RD-C-3/1)-Z4-C031-MV | 2026-11-24 → 2027-04-29 (+156d) | 2026-11-25 → 2027-05-01 (+157d) |  |
| 2927 | **RHD4-02-002-C031-(MV)-Medium Voltage cables 3Cx 500 mm²** | 2026-11-25 → 2027-05-01 (+157d) | 2026-11-29 → 2027-05-04 (+156d) |  |
| RHD4CZ4C031MV3100 | Installation of Medium Voltage Cables 3Cx 500 mm² - (RD-C-3/1)-Z4-C031-MV | 2026-11-25 → 2027-05-01 (+157d) | 2026-11-29 → 2027-05-04 (+156d) | resources Skilled labor [32.78 h]; Unskilled Labor [130.9 h]; Electrician [65.45 h]; Equipment Opreator [98.23 h]; Boom Truck [32.78 h]; Cable Laying Machine [65.45 h]; Cable 13.8 kV 3Cx 500 mm² Al/XLPE,/LLDPE / Unarmored [405.84 m] → Skilled labor [32.8 h]; Unskilled Labor [130.9 h]; Electrician [65.45 h]; Equipment Opreator [98.23 h]; Boom Truck [32.8 h]; Cable Laying Machine [65.45 h]; Cable 13.8 kV 3Cx 500 mm² Al/XLPE,/LLDPE / Unarmored [405.84 m] |
| RHD4CZ4C031MV3300 | Testing of Medium Voltage Cables 3Cx 500 mm² - (RD-C-3/1)-Z4-C031-MV | 2026-11-28 → 2027-05-03 (+156d) | 2026-11-29 → 2027-05-04 (+156d) |  |
| 2931 | **RHD4-02-002-Z4-C031-Low Voltage Network - LV** | 2026-12-06 → 2027-05-11 (+156d) | 2026-12-14 → 2027-05-24 (+161d) |  |
| 2934 | **RHD4-02-002-C031-(LV)-Low Voltage cables** | 2026-12-06 → 2027-05-11 (+156d) | 2026-12-14 → 2027-05-24 (+161d) |  |
| RHD4CZ4C031LV3100 | Excavation for Low Voltage Cables for Low Voltage Network - (RD-C-3/1)-Z4-C031-LV | 2026-12-06 → 2027-05-11 (+156d) | 2026-12-07 → 2027-05-12 (+156d) |  |
| RHD4CZ4C031LV3200 | Cable Laying of Low Voltage Cables for Low Voltage Network - (RD-C-3/1)-Z4-C031-LV | 2026-12-08 → 2027-05-13 (+156d) | 2026-12-09 → 2027-05-19 (+161d) | resources Skilled labor [17.86 h]; Unskilled Labor [71.55 h]; Electrician [35.72 h]; Equipment Opreator [53.58 h]; Boom Truck [17.86 h]; Cable Laying Machine [35.72 h]; Cable, Copper 4x185mm2/ CU/XLPE/PVC [193.96 m]; Cable, Copper 4x50mm2/ CU/XLPE/PVC +1x25mm2 CU/PVC [101.49 m] → Skilled labor [17.86 h]; Unskilled Labor [71.55 h]; Electrician [35.72 h]; Equipment Opreator [53.6 h]; Boom Truck [17.86 h]; Cable Laying Machine [35.72 h]; Cable, Copper 4x185mm2/ CU/XLPE/PVC [193.96 m]; Cable, Copper 4x50mm2/ CU/XLPE/PVC +1x25mm2 CU/PVC [101.49 m] |
| RHD4CZ4C031LV3300 | Warning tape and Backfill for Low Voltage Cables for Low Voltage Network - (RD-C-3/1)-Z4-C031-LV | 2026-12-10 → 2027-05-20 (+161d) | 2026-12-12 → 2027-05-22 (+161d) |  |
| RHD4CZ4C031LV3400 | Testing of Low Voltage Cables for Low Voltage Network - (RD-C-3/1)-Z4-C031-LV | 2026-12-13 → 2027-05-23 (+161d) | 2026-12-14 → 2027-05-24 (+161d) |  |
| 2937 | **RHD4-02-002-Z4-C031-Street Lighting Network - SL** | 2026-11-18 → 2027-04-24 (+157d) | 2026-12-21 → 2027-05-31 (+161d) |  |
| 2938 | **RHD4-02-002-C031-(SL)-Street Lighting duct banks** | 2026-11-18 → 2027-04-24 (+157d) | 2026-11-28 → 2027-05-03 (+156d) |  |
| RHD4CZ4C031SL2100 | Excavation of Duct Banks for Street Lighting Network - (RD-C-3/1)-Z4-C031-SL | 2026-11-18 → 2027-04-24 (+157d) | 2026-11-19 → 2027-04-25 (+157d) |  |
| RHD4CZ4C031SL2200 | Installation of Duct Banks for Street Lighting Network - (RD-C-3/1)-Z4-C031-SL | 2026-11-21 → 2027-04-26 (+156d) | 2026-11-23 → 2027-04-28 (+156d) |  |
| RHD4CZ4C031SL2300 | Pouring of Duct Banks for Street Lighting Network - (RD-C-3/1)-Z4-C031-SL | 2026-11-24 → 2027-04-29 (+156d) | 2026-11-25 → 2027-05-01 (+157d) |  |
| RHD4CZ4C031SL2400 | Backfilling of Duct Banks for Street Lighting Network - (RD-C-3/1)-Z4-C031-SL | 2026-11-26 → 2027-05-02 (+157d) | 2026-11-28 → 2027-05-03 (+156d) | resources Skilled labor [16.12 h]; Unskilled Labor [16.12 h]; Equipment Opreator [6.43 h]; Excavator-Poclain [6.43 h]; Road Crossing Duct for Street Lighting cables UPVC (2x?110mm) [2.13 m]; Road Crossing Duct for Street Lighting cables UPVC (4x?110mm) [2.3 m] → Skilled labor [16.12 h]; Unskilled Labor [16.12 h]; Equipment Opreator [6.4 h]; Excavator-Poclain [6.4 h]; Road Crossing Duct for Street Lighting cables UPVC (2x?110mm) [2.13 m]; Road Crossing Duct for Street Lighting cables UPVC (4x?110mm) [2.3 m] |
| 2939 | **RHD4-02-002-C031-(SL)-Street Lighting Drawpit** | 2026-12-01 → 2027-05-06 (+156d) | 2026-12-05 → 2027-05-10 (+156d) |  |
| RHD4CZ4C031SL5100 | Excavation of Drawpit size 600x600x900mm for Street Lighting Network - (RD-C-3/1)-Z4-C031-SL | 2026-12-01 → 2027-05-06 (+156d) | 2026-12-02 → 2027-05-08 (+157d) |  |
| RHD4CZ4C031SL5200 | Installation of Drawpit size 600x600x900mm for Street Lighting Network - (RD-C-3/1)-Z4-C031-SL | 2026-12-03 → 2027-05-09 (+157d) | 2026-12-05 → 2027-05-10 (+156d) |  |
| 2940 | **RHD4-02-002-C031-(SL)-Street Lighting cables** | 2026-11-30 → 2027-05-05 (+156d) | 2026-12-16 → 2027-05-26 (+161d) |  |
| RHD4CZ4C031SL3100 | Excavation for Street Lighting Cables for Street Lighting Network - (RD-C-3/1)-Z4-C031-SL | 2026-11-30 → 2027-05-05 (+156d) | 2026-12-01 → 2027-05-06 (+156d) |  |
| RHD4CZ4C031SL3200 | Cable Laying of Street Lighting Cables for Street Lighting Network - (RD-C-3/1)-Z4-C031-SL | 2026-12-02 → 2027-05-08 (+157d) | 2026-12-03 → 2027-05-09 (+157d) |  |
| RHD4CZ4C031SL3300 | Warning tape and Backfill for Street Lighting Cables for Street Lighting Network - (RD-C-3/1)-Z4-C031-SL | 2026-12-05 → 2027-05-10 (+156d) | 2026-12-06 → 2027-05-11 (+156d) |  |
| RHD4CZ4C031SL3400 | Testing of Street Lighting Cables for Street Lighting Network - (RD-C-3/1)-Z4-C031-SL | 2026-12-15 → 2027-05-25 (+161d) | 2026-12-16 → 2027-05-26 (+161d) |  |
| 2941 | **RHD4-02-002-C031-(SL)-Street Lighting Poles** | 2026-11-29 → 2027-05-04 (+156d) | 2026-12-21 → 2027-05-31 (+161d) |  |
| RHD4CZ4C031SL1100 | Excavation for RC Base for Lighting Poles for Street Lighting Network - (RD-C-3/1)-Z4-C031-SL | 2026-11-29 → 2027-05-04 (+156d) | 2026-11-30 → 2027-05-05 (+156d) |  |
| RHD4CZ4C031SL1200 | Installation for RC Base for Lighting Poles for Street Lighting Network - (RD-C-3/1)-Z4-C031-SL | 2026-12-01 → 2027-05-06 (+156d) | 2026-12-02 → 2027-05-08 (+157d) |  |
| RHD4CZ4C031SL1300 | Backfill for RC Base for Lighting Poles for Street Lighting Network - (RD-C-3/1)-Z4-C031-SL | 2026-12-03 → 2027-05-09 (+157d) | 2026-12-05 → 2027-05-10 (+156d) |  |
| RHD4CZ4C031SL1400 | Installation for Lighting Poles for Street Lighting Network - (RD-C-3/1)-Z4-C031-SL | 2026-12-17 → 2027-05-27 (+161d) | 2026-12-19 → 2027-05-29 (+161d) |  |
| RHD4CZ4C031SL1500 | Luminaire Installation for Lighting Poles for Street Lighting Network - (RD-C-3/1)-Z4-C031-SL | 2026-12-20 → 2027-05-30 (+161d) | 2026-12-21 → 2027-05-31 (+161d) |  |
| 2943 | **RHD4-02-002-C031-(SL)-Street Lighting Earthing System** | 2026-12-20 → 2027-05-30 (+161d) | 2026-12-21 → 2027-05-31 (+161d) |  |
| RHD4CZ4C031SL6100 | Installation of Earthing for Lighting Poles and Fedder Pillers for Street Lighting Network - (RD-C-3/1)-Z4-C031-SL | 2026-12-20 → 2027-05-30 (+161d) | 2026-12-21 → 2027-05-31 (+161d) |  |
| 2949 | **RHD4-02-002-Z4-C031-Telecommunications Network - TC** | 2026-12-01 → 2027-05-06 (+156d) | 2026-12-09 → 2027-05-19 (+161d) |  |
| 2950 | **RHD4-02-002-C031-(TC)-Telecommunications Ducts** | 2026-12-01 → 2027-05-06 (+156d) | 2026-12-09 → 2027-05-19 (+161d) |  |
| RHD4CZ4C031TC2100 | Excavation of HDPE Ducts for Telecom Network - (RD-C-3/1)-Z4-C031-TC | 2026-12-01 → 2027-05-06 (+156d) | 2026-12-02 → 2027-05-08 (+157d) |  |
| RHD4CZ4C031TC2200 | Installation of HDPE Ducts for Telecom Network - (RD-C-3/1)-Z4-C031-TC | 2026-12-03 → 2027-05-09 (+157d) | 2026-12-05 → 2027-05-10 (+156d) |  |
| RHD4CZ4C031TC2400 | Backfilling of HDPE Ducts for Telecom Network - (RD-C-3/1)-Z4-C031-TC | 2026-12-08 → 2027-05-13 (+156d) | 2026-12-09 → 2027-05-19 (+161d) |  |
| 2951 | **RHD4-02-002-C031-(TC)-Telecommunications Manholes** | 2026-12-03 → 2027-05-09 (+157d) | 2026-12-07 → 2027-05-12 (+156d) |  |
| RHD4CZ4C031TC5100 | Excavation for Manholes for Telecom Network - (RD-C-3/1)-Z4-C031-TC | 2026-12-03 → 2027-05-09 (+157d) | 2026-12-05 → 2027-05-10 (+156d) |  |
| RHD4CZ4C031TC5200 | Installation of Manholes for Telecom Network - (RD-C-3/1)-Z4-C031-TC | 2026-12-06 → 2027-05-11 (+156d) | 2026-12-07 → 2027-05-12 (+156d) |  |
| 2953 | **RHD4-02-002-Z4-C031-Information and Communication Technologies - ICT** | 2026-08-16 → 2027-02-15 (+183d) | 2026-12-16 → 2027-05-26 (+161d) |  |
| 2954 | **RHD4-02-002-C031-(ICT)-Information and Communication Technologies Ducts** | 2026-12-06 → 2027-05-11 (+156d) | 2026-12-16 → 2027-05-26 (+161d) |  |
| RHD4CZ4C031ICT2100 | Excavation of HDPE Ducts for ICT Network - (RD-C-3/1)-Z4-C031-ICT | 2026-12-06 → 2027-05-11 (+156d) | 2026-12-08 → 2027-05-13 (+156d) | resources Skilled labor [27.23 h]; Unskilled Labor [27.23 h]; Equipment Opreator [54.34 h]; Excavator-Poclain [27.23 h]; Dump Truck [27.23 h]; (2*50mm) HDPE ducts -ICT [73.6 m]; (2*50mm+2*32mm) HDPE ducts -ICT [1.3 m] → Skilled labor [27.2 h]; Unskilled Labor [27.2 h]; Equipment Opreator [54.34 h]; Excavator-Poclain [27.2 h]; Dump Truck [27.2 h]; (2*50mm) HDPE ducts -ICT [73.6 m]; (2*50mm+2*32mm) HDPE ducts -ICT [1.3 m] |
| RHD4CZ4C031ICT2200 | Installation of HDPE Ducts for ICT Network - (RD-C-3/1)-Z4-C031-ICT | 2026-12-09 → 2027-05-19 (+161d) | 2026-12-13 → 2027-05-23 (+161d) | resources Carpenter [4.03 h]; Skilled labor [40.84 h]; Unskilled Labor [40.84 h]; Steel Fixer [4.03 h]; (2*50mm) HDPE ducts -ICT [239.2 m]; (2*50mm+2*32mm) HDPE ducts -ICT [4.23 m] → Carpenter [4 h]; Skilled labor [40.8 h]; Unskilled Labor [40.8 h]; Steel Fixer [4 h]; (2*50mm) HDPE ducts -ICT [239.2 m]; (2*50mm+2*32mm) HDPE ducts -ICT [4.23 m] |
| RHD4CZ4C031ICT2400 | Backfilling of HDPE Ducts for ICT Network - (RD-C-3/1)-Z4-C031-ICT | 2026-12-14 → 2027-05-24 (+161d) | 2026-12-16 → 2027-05-26 (+161d) | resources Skilled labor [27.23 h]; Unskilled Labor [27.23 h]; Equipment Opreator [10.89 h]; Excavator-Poclain [10.89 h]; (2*50mm) HDPE ducts -ICT [55.2 m]; (2*50mm+2*32mm) HDPE ducts -ICT [0.98 m] → Skilled labor [27.2 h]; Unskilled Labor [27.2 h]; Equipment Opreator [10.89 h]; Excavator-Poclain [10.89 h]; (2*50mm) HDPE ducts -ICT [55.2 m]; (2*50mm+2*32mm) HDPE ducts -ICT [0.98 m] |
| 2955 | **RHD4-02-002-C031-(ICT)-Information and Communication Technologies Manholes** | 2026-12-09 → 2027-05-19 (+161d) | 2026-12-13 → 2027-05-23 (+161d) |  |
| RHD4CZ4C031ICT5100 | Excavation for Manholes for ICT Network - (RD-C-3/1)-Z4-C031-ICT | 2026-12-09 → 2027-05-19 (+161d) | 2026-12-10 → 2027-05-20 (+161d) |  |
| RHD4CZ4C031ICT5200 | Installation of Manholes for ICT Network - (RD-C-3/1)-Z4-C031-ICT | 2026-12-12 → 2027-05-22 (+161d) | 2026-12-13 → 2027-05-23 (+161d) |  |
| 2956 | **RHD4-02-002-C031-(ICT)-Information and Communication Technologies Road Crossings** | 2026-08-16 → 2027-02-15 (+183d) | 2026-08-24 → 2027-02-27 (+187d) |  |
| RHD4CZ4C031ICT3100 | Excavation for Road Crossings for ICT Network - (RD-C-3/1)-Z4-C031-ICT | 2026-08-16 → 2027-02-15 (+183d) | 2026-08-17 → 2027-02-16 (+183d) |  |
| RHD4CZ4C031ICT3200 | Installation of Road Crossings for ICT Network - (RD-C-3/1)-Z4-C031-ICT | 2026-08-18 → 2027-02-20 (+186d) | 2026-08-19 → 2027-02-21 (+186d) |  |
| RHD4CZ4C031ICT3300 | Pouring of Road Crossings for ICT Network - (RD-C-3/1)-Z4-C031-ICT | 2026-08-20 → 2027-02-23 (+187d) | 2026-08-22 → 2027-02-24 (+186d) |  |
| RHD4CZ4C031ICT3400 | Backfilling of Road Crossings for ICT Network - (RD-C-3/1)-Z4-C031-ICT | 2026-08-23 → 2027-02-25 (+186d) | 2026-08-24 → 2027-02-27 (+187d) |  |
| 2957 | **RHD4-02-002-Z4-C031-Security Network - CCTV** | 2026-12-17 → 2027-05-27 (+161d) | 2027-02-20 → 2027-07-13 (+143d) |  |
| 2958 | **RHD4-02-002-C031-(CCTV)-Civil Works** | 2026-12-17 → 2027-05-27 (+161d) | 2026-12-28 → 2027-06-07 (+161d) |  |
| RHD4CZ4C031CCTV2100 | Civil Works for Security Network - (RD-C-3/1)-Z4-C031-CCTV | 2026-12-17 → 2027-05-27 (+161d) | 2026-12-28 → 2027-06-07 (+161d) |  |
| 2959 | **RHD4-02-002-C031-(CCTV)-CCTV Poles** | 2026-12-29 → 2027-06-08 (+161d) | 2027-01-09 → 2027-06-19 (+161d) |  |
| RHD4CZ4C031CCTV1100 | Excavation for RC Base for CCTV Poles for Security Network - (RD-C-3/1)-Z4-C031-CCTV | 2026-12-29 → 2027-06-08 (+161d) | 2026-12-30 → 2027-06-09 (+161d) |  |
| RHD4CZ4C031CCTV1200 | Installation for RC Base for CCTV Poles for Security Network - (RD-C-3/1)-Z4-C031-CCTV | 2026-12-31 → 2027-06-10 (+161d) | 2027-01-02 → 2027-06-12 (+161d) |  |
| RHD4CZ4C031CCTV1300 | Backfill for RC Base for CCTV Poles for Security Network - (RD-C-3/1)-Z4-C031-CCTV | 2027-01-03 → 2027-06-13 (+161d) | 2027-01-04 → 2027-06-14 (+161d) |  |
| RHD4CZ4C031CCTV1400 | Installation for CCTV Poles for Security Network - (RD-C-3/1)-Z4-C031-CCTV | 2027-01-05 → 2027-06-15 (+161d) | 2027-01-06 → 2027-06-16 (+161d) |  |
| RHD4CZ4C031CCTV1500 | Protection post Installation for CCTV Poles for Security Network - (RD-C-3/1)-Z4-C031-CCTV | 2027-01-07 → 2027-06-17 (+161d) | 2027-01-09 → 2027-06-19 (+161d) |  |
| 2960 | **RHD4-02-002-C031-(CCTV)-Camera** | 2027-02-01 → 2027-06-24 (+143d) | 2027-02-02 → 2027-06-26 (+144d) |  |
| RHD4CZ4C031CCTV3100 | Installation for Cameras for Security Network - (RD-C-3/1)-Z4-C031-CCTV | 2027-02-01 → 2027-06-24 (+143d) | 2027-02-02 → 2027-06-26 (+144d) |  |
| 2961 | **RHD4-02-002-C031-(CCTV)-Power and Infrastructure** | 2027-01-30 → 2027-06-22 (+143d) | 2027-02-02 → 2027-06-26 (+144d) |  |
| RHD4CZ4C031CCTV4100 | Installation of Power outlet, UPS and midspan for PTZ Camerafor Cameras for Security Network - (RD-C-3/1)-Z4-C031-CCTV | 2027-01-30 → 2027-06-22 (+143d) | 2027-01-31 → 2027-06-23 (+143d) |  |
| RHD4CZ4C031CCTV4200 | Short Range Wireless PoP wireless Bridgefor CCTV Poles for Security Network - (RD-C-3/1)-Z4-C031-CCTV | 2027-02-01 → 2027-06-24 (+143d) | 2027-02-02 → 2027-06-26 (+144d) |  |

| ID | Task | Start | Finish | Duration | Complete | Predecessors | Other |
| --- | --- | --- | --- | --- | --- | --- | --- |
| 2963 | **RHD4-02-002-C031-(CCTV)-CCTV Panels and Components** | 2027-02-03 → 2027-06-27 (+144d) | 2027-02-20 → 2027-07-13 (+143d) |  |  |  |  |
| RHD4CZ4C031CCTV6100 | Installation for CCTV Panels for Security Network - (RD-C-3/1)-Z4-C031-CCTV | 2027-02-03 → 2027-06-27 (+144d) | 2027-02-20 → 2027-07-13 (+143d) |  |  |  |  |
| 2407 | **RHD4-02-002-Z4-L014** | 2026-08-10 → 2026-07-06 (-35d) | 2027-09-16 → 2028-03-16 (+182d) |  |  |  |  |
| 2586 | **RHD4-02-002-Z4-L014-Road Works - RD** | 2026-08-23 → 2026-07-06 (-48d) | 2027-09-16 → 2028-03-16 (+182d) |  |  |  |  |
| 2587 | **RHD4-02-002-L014-(RD)-Subgrade** | 2026-08-23 → 2026-07-06 (-48d) | 2026-08-27 → 2026-07-15 (-43d) |  |  |  |  |
| RHD4CZ4L014RD1100 | Supply, lay and compaction subgrade compacted thickness 300 mm for Roads - (RD-L-14)-Z4-L014-RD | 2026-08-23 → 2026-07-06 A (-48d) | 2026-08-27 → 2026-07-15 A (-43d) |  | 0% → 100% |  | resources Skilled labor [219.22 h]; Unskilled Labor [438.34 h]; Electrician [219.22 h]; Equipment Opreator [1497.1 h]; Water Truck [72.31 h]; Roller compactor [109.56 h]; Grader [219.22 h]; Dump Truck [1096 h]; Subgrade [10542.1 m3] → Skilled labor [219.2 h]; Unskilled Labor [438.34 h]; Electrician [219.2 h]; Equipment Opreator [1497.1 h]; Water Truck [72.31 h]; Roller compactor [109.56 h]; Grader [219.2 h]; Dump Truck [1096 h]; Subgrade [10542.1 m3] |
| 2588 | **RHD4-02-002-L014-(RD)-Aggregate Base Course** | 2026-08-29 → 2027-02-25 (+180d) | 2026-09-02 → 2027-03-17 (+196d) |  |  |  |  |
| RHD4CZ4L014RD2100 | Supply, lay and compaction Aggregate base course compacted thickness 300 mmfor Roads - (RD-L-14)-Z4-L014-RD | 2026-08-29 → 2027-02-25 (+180d) | 2026-09-02 → 2027-03-17 (+196d) | 5d → 15d |  |  | resources Skilled labor [81.13 h]; Unskilled Labor [162.38 h]; Equipment Opreator [1027.72 h]; Water Truck [53.58 h]; Roller compactor [162.38 h]; Grader [162.38 h]; Dump Truck [649.5 h]; Aggregate Base Courses [6621.52 m3] → Skilled labor [81.13 h]; Unskilled Labor [162.4 h]; Equipment Opreator [1027.72 h]; Water Truck [53.6 h]; Roller compactor [162.4 h]; Grader [162.4 h]; Dump Truck [649.5 h]; Aggregate Base Courses [6621.52 m3] |
| 2589 | **RHD4-02-002-L014-(RD)-Bituminous base course Two Layers, including (MC1)&(RC2)** | 2026-09-03 → 2027-03-18 (+196d) | 2027-07-29 → 2028-01-25 (+180d) |  |  |  |  |
| RHD4CZ4L014RD3100 | Supply, lay and Asphaltic base course including Prime Coat (MC1) for 1st Layer - (RD-L-14)-Z4-L014-RD | 2026-09-03 → 2027-03-18 (+196d) | 2026-09-06 → 2027-03-21 (+196d) |  |  |  |  |
| RHD4CZ4L014RD3200 | Supply, lay and Asphaltic base course including Tack Coat (RC2) for 2nd Layer - (RD-L-14)-Z4-L014-RD | 2027-07-27 → 2028-01-23 (+180d) | 2027-07-29 → 2028-01-25 (+180d) |  |  |  |  |
| 2591 | **RHD4-02-002-L014-(RD)-Precast Concrete Curb** | 2027-07-31 → 2028-01-26 (+179d) | 2027-08-10 → 2028-02-06 (+180d) |  |  |  |  |
| RHD4CZ4L014RD5100 | Supply and installation Precast Concrete Kerb for Roads - (RD-L-14)-Z4-L014-RD | 2027-07-31 → 2028-01-26 (+179d) | 2027-08-10 → 2028-02-06 (+180d) |  |  |  | resources Mason [316.04 h]; Skilled labor [105.31 h]; Unskilled Labor [316.04 h]; Equipment Opreator [210.62 h]; Bobcat [105.31 h]; Concrete Mixer Truck [105.31 h]; Precast Concrete Curbstone, type K1 [4352.51 m] → Mason [316 h]; Skilled labor [105.31 h]; Unskilled Labor [316 h]; Equipment Opreator [210.62 h]; Bobcat [105.31 h]; Concrete Mixer Truck [105.31 h]; Precast Concrete Curbstone, type K1 [4352.51 m] |
| 2594 | **RHD4-02-002-L014-(RD)-Traffic Signage** | 2027-08-11 → 2028-02-07 (+180d) | 2027-08-18 → 2028-02-14 (+180d) |  |  |  |  |
| RHD4CZ4L014RD8100 | Installation of Traffic Signage for Road Network - (RD-L-14)-Z4-L014-RD | 2027-08-11 → 2028-02-07 (+180d) | 2027-08-18 → 2028-02-14 (+180d) |  |  |  |  |
| 2592 | **RHD4-02-002-L014-(RD)-Precast Interlocking Block Pavers** | 2027-08-19 → 2028-02-15 (+180d) | 2027-09-06 → 2028-03-08 (+184d) |  |  |  |  |
| RHD4CZ4L014RD6100 | Interlocking block pavers for sidewalk-footpath for Side walks and Parking areas - (RD-L-14)-Z4-L014-RD | 2027-08-19 → 2028-02-15 (+180d) | 2027-09-06 → 2028-03-08 (+184d) |  |  |  |  |
| 2590 | **RHD4-02-002-L014-(RD)-Bituminous concrete wearing course including tack coat (RC2)** | 2027-09-07 → 2028-03-09 (+184d) | 2027-09-09 → 2028-03-12 (+185d) |  |  |  |  |
| RHD4CZ4L014RD4100 | Supply, lay and compaction Asphaltic wearing course including tack Coat (RC2)for Road Network - (RD-L-14)-Z4-L014-RD | 2027-09-07 → 2028-03-09 (+184d) | 2027-09-09 → 2028-03-12 (+185d) |  |  |  |  |
| 2593 | **RHD4-02-002-L014-(RD)-Pavement Marking** | 2027-09-11 → 2028-03-13 (+184d) | 2027-09-16 → 2028-03-16 (+182d) |  |  |  |  |
| RHD4CZ4L014RD7100 | Pavement Markings for Road Network - (RD-L-14)-Z4-L014-RD | 2027-09-11 → 2028-03-13 (+184d) | 2027-09-16 → 2028-03-16 (+182d) | 6d → 4d |  |  | resources Skilled labor [32.78 h]; Unskilled Labor [65.56 h]; Equipment Opreator [32.78 h]; Road Marking Machine [32.78 h]; Retroreflective Thermoplastic White Traffic Markings [340.25 m2]; Retroreflective Thermoplastic Yellow, Traffic Markings [320.32 m2]; Retroreflective raised pavement markers (cat eyes) [132 nr] → Skilled labor [32.8 h]; Unskilled Labor [65.56 h]; Equipment Opreator [32.8 h]; Road Marking Machine [32.8 h]; Retroreflective Thermoplastic White Traffic Markings [340.25 m2]; Retroreflective Thermoplastic Yellow, Traffic Markings [320.32 m2]; Retroreflective raised pavement markers (cat eyes) [132 nr] |
| 2411 | **RHD4-02-002-Z4-L014-Storm Network - ST** | 2026-08-10 → 2026-08-04 (-6d) | 2026-11-24 → 2027-04-28 (+155d) |  |  |  |  |
| 6394 | **RHD4-02-002-L014-(ST)-GRP Pipes - 1400 mm diameter** | 2026-08-10 → 2027-02-09 (+183d) | 2026-08-22 → 2027-02-24 (+186d) |  |  |  |  |
| RHD4CZ4L014ST1110 | Excavation works for GRP Pipe Line 1400 mm - (RD-L-14)-Z4-L014-ST | 2026-08-10 → 2027-02-09 (+183d) | 2026-08-11 → 2027-02-10 (+183d) |  |  |  | resources Skilled labor [5.99 h]; Unskilled Labor [5.99 h]; Equipment Opreator [7.19 h]; Excavator-Poclain [5.99 h]; Dump Truck [1.2 h]; GRP (1400mm Diameter) - ST - Depth less than 4.5 m [20.74 m] → Skilled labor [5.99 h]; Unskilled Labor [5.99 h]; Equipment Opreator [7.2 h]; Excavator-Poclain [5.99 h]; Dump Truck [1.2 h]; GRP (1400mm Diameter) - ST - Depth less than 4.5 m [20.74 m] |
| RHD4CZ4L014ST1210 | Bedding works for GRP Pipe Line 1400 mm - (RD-L-14)-Z4-L014-ST | 2026-08-13 → 2027-02-15 (+186d) | 2026-08-15 → 2027-02-16 (+185d) |  |  |  |  |
| RHD4CZ4L014ST1310 | Installing for GRP Pipe Line 1400 mm - (RD-L-14)-Z4-L014-ST | 2026-08-16 → 2027-02-17 (+185d) | 2026-08-17 → 2027-02-18 (+185d) |  |  |  |  |
| RHD4CZ4L014ST1410 | Primary Test for GRP Pipe Line 1400 mm - (RD-L-14)-Z4-L014-ST | 2026-08-18 → 2027-02-20 (+186d) | 2026-08-19 → 2027-02-21 (+186d) |  |  |  |  |
| RHD4CZ4L014ST1510 | Backfilling and warning tape works for GRP Pipe Line 1400 mm - (RD-L-14)-Z4-L014-ST | 2026-08-20 → 2027-02-23 (+187d) | 2026-08-22 → 2027-02-24 (+186d) |  |  |  |  |
| 6393 | **RHD4-02-002-L014-(ST)-GRP Pipes - 1300 mm diameter** | 2026-08-12 → 2026-08-04 (-8d) | 2026-08-26 → 2027-02-28 (+186d) |  |  |  |  |
| RHD4CZ4L014ST1109 | Excavation works for GRP Pipe Line 1300 mm - (RD-L-14)-Z4-L014-ST | 2026-08-12 → 2026-08-04 A (-8d) | 2026-08-15 → 2026-08-28 A (+13d) |  | 0% → 100% |  |  |
| RHD4CZ4L014ST1209 | Bedding works for GRP Pipe Line 1300 mm - (RD-L-14)-Z4-L014-ST | 2026-08-16 → 2026-08-06 A (-10d) | 2026-08-18 → 2026-08-30 A (+12d) |  | 0% → 100% |  | resources Skilled labor [24.83 h]; Unskilled Labor [49.66 h]; Equipment Opreator [49.66 h]; Excavator-Poclain [24.83 h]; Dump Truck [24.83 h]; GRP (1300mm Diameter) - ST - Depth less than 2.5 m [17 m]; GRP (1300mm Diameter) - ST - Depth: 2.51m - 3.5m [11.74 m] → Skilled labor [24.8 h]; Unskilled Labor [49.66 h]; Equipment Opreator [49.66 h]; Excavator-Poclain [24.8 h]; Dump Truck [24.8 h]; GRP (1300mm Diameter) - ST - Depth less than 2.5 m [17 m]; GRP (1300mm Diameter) - ST - Depth: 2.51m - 3.5m [11.74 m] |
| RHD4CZ4L014ST1309 | Installing for GRP Pipe Line 1300 mm - (RD-L-14)-Z4-L014-ST | 2026-08-19 → 2026-08-08 A (-11d) | 2026-08-20 → 2026-09-02 A (+13d) |  | 0% → 100% |  |  |
| RHD4CZ4L014ST1409 | Primary Test for GRP Pipe Line 1300 mm - (RD-L-14)-Z4-L014-ST | 2026-08-22 → 2027-02-11 (+173d) | 2026-08-23 → 2027-02-13 (+174d) |  |  |  |  |
| RHD4CZ4L014ST1509 | Backfilling and warning tape works for GRP Pipe Line 1300 mm - (RD-L-14)-Z4-L014-ST | 2026-08-24 → 2027-02-25 (+185d) | 2026-08-26 → 2027-02-28 (+186d) |  |  |  |  |
| 2428 | **RHD4-02-002-L014-(ST)-MH Works - 1200 mm diameter** | 2026-08-27 → 2026-08-04 (-23d) | 2026-09-07 → 2027-03-15 (+189d) |  |  |  |  |
| RHD4CZ4L014ST3100 | Excavation and PC Blinding works for MH 1200 mm - (RD-L-14)-Z4-L014-ST | 2026-08-27 → 2026-08-04 A (-23d) | 2026-08-29 → 2027-03-02 (+185d) |  | 0% → 50% |  |  |
| RHD4CZ4L014ST3200 | Installation of Base for MH 1200 mm - (RD-L-14)-Z4-L014-ST | 2026-08-30 → 2026-09-19 A (+20d) | 2026-08-31 → 2027-03-04 (+185d) |  | 0% → 50% |  |  |
| RHD4CZ4L014ST3300 | MH Ring and C.Slab works and Backfilling works for MH 1200 mm - (RD-L-14)-Z4-L014-ST | 2026-09-01 → 2027-03-06 (+186d) | 2026-09-02 → 2027-03-07 (+186d) |  |  |  |  |
| RHD4CZ4L014ST3400 | Steel Cover for MH 1200 mm - (RD-L-14)-Z4-L014-ST | 2026-09-03 → 2027-03-08 (+186d) | 2026-09-05 → 2027-03-13 (+189d) |  |  |  |  |
| RHD4CZ4L014ST3500 | Finishing, Benching, Testing works for MH 1200 mm - (RD-L-14)-Z4-L014-ST | 2026-09-06 → 2027-03-14 (+189d) | 2026-09-07 → 2027-03-15 (+189d) |  |  |  |  |
| 2430 | **RHD4-02-002-L014-(ST)-MH Works - 2000 mm diameter** | 2026-10-04 → 2026-08-04 (-61d) | 2026-11-16 → 2027-04-15 (+150d) |  |  |  |  |
| RHD4CZ4L014ST3102 | Excavation and PC Blinding works for MH 2000 mm - (RD-L-14)-Z4-L014-ST | 2026-10-04 → 2026-08-04 A (-61d) | 2026-10-10 → 2026-08-23 A (-48d) |  | 0% → 100% | RHD4CZ4L014ST3100, RHD4ENSDZ4APPST110, RHD4ENMSST2000, RHD4CZ4C031ST3100, RHD4CZ2L102ST1502, RHD4CZ7RA03MV5400, RHD4CZ7L015ICT3400, RHD4CZ3C083ST8500 → RHD4CZ4L014ST3100, RHD4ENSDZ4APPST110, RHD4ENMSST2000, RHD4CZ4C031ST3100, RHD4CZ2L102ST1502, RHD4CZ7L015ICT3400, RHD4CZ3C083ST8500 |  |
| RHD4CZ4L014ST3202 | Installation of Base for MH 2000 mm - (RD-L-14)-Z4-L014-ST | 2026-10-11 → 2026-09-19 A (-22d) | 2026-10-19 → 2027-03-23 (+155d) |  | 0% → 40% |  |  |
| RHD4CZ4L014ST3302 | MH Ring and C.Slab works and Backfilling works for MH 2000 mm - (RD-L-14)-Z4-L014-ST | 2026-10-20 → 2027-03-24 (+155d) | 2026-10-28 → 2027-04-01 (+155d) |  |  |  | resources Skilled labor [85.27 h]; Unskilled Labor [85.27 h]; Equipment Opreator [59.68 h]; Boom Truck [34.09 h]; Concrete Mixer Truck [25.59 h]; MH (2000mm Diameter) - ST - depth 1.50 - 2.5m [1.4 nr]; MH (2000mm Diameter) - ST - depth 2.51 - 3.5m [3.85 nr]; MH (2000mm Diameter) - ST - depth 3.51 -4.5m [0.7 nr] → Skilled labor [85.27 h]; Unskilled Labor [85.27 h]; Equipment Opreator [59.68 h]; Boom Truck [34.09 h]; Concrete Mixer Truck [25.6 h]; MH (2000mm Diameter) - ST - depth 1.50 - 2.5m [1.4 nr]; MH (2000mm Diameter) - ST - depth 2.51 - 3.5m [3.85 nr]; MH (2000mm Diameter) - ST - depth 3.51 -4.5m [0.7 nr] |
| RHD4CZ4L014ST3402 | Steel Cover for MH 2000 mm - (RD-L-14)-Z4-L014-ST | 2026-11-03 → 2027-04-03 (+151d) | 2026-11-09 → 2027-04-08 (+150d) |  |  |  |  |
| RHD4CZ4L014ST3502 | Finishing, Benching, Testing works for MH 2000 mm - (RD-L-14)-Z4-L014-ST | 2026-11-10 → 2027-04-10 (+151d) | 2026-11-16 → 2027-04-15 (+150d) |  |  |  |  |
| 2429 | **RHD4-02-002-L014-(ST)-MH Works - 1500 mm diameter** | 2026-10-11 → 2026-08-04 (-68d) | 2026-11-24 → 2027-04-28 (+155d) |  |  |  |  |
| RHD4CZ4L014ST3101 | Excavation and PC Blinding works for MH 1500 mm - (RD-L-14)-Z4-L014-ST | 2026-10-11 → 2026-08-04 A (-68d) | 2026-10-12 → 2026-08-06 A (-67d) |  | 0% → 100% |  |  |
| RHD4CZ4L014ST3201 | Installation of Base for MH 1500 mm - (RD-L-14)-Z4-L014-ST | 2026-10-20 → 2026-09-20 A (-30d) | 2026-10-21 → 2027-03-25 (+155d) |  | 0% → 50% |  |  |
| RHD4CZ4L014ST3301 | MH Ring and C.Slab works and Backfilling works for MH 1500 mm - (RD-L-14)-Z4-L014-ST | 2026-10-29 → 2027-04-03 (+156d) | 2026-10-31 → 2027-04-04 (+155d) |  |  |  |  |
| RHD4CZ4L014ST3401 | Steel Cover for MH 1500 mm - (RD-L-14)-Z4-L014-ST | 2026-11-21 → 2027-04-25 (+155d) | 2026-11-22 → 2027-04-26 (+155d) |  |  |  |  |
| RHD4CZ4L014ST3501 | Finishing, Benching, Testing works for MH 1500 mm - (RD-L-14)-Z4-L014-ST | 2026-11-23 → 2027-04-27 (+155d) | 2026-11-24 → 2027-04-28 (+155d) |  |  |  |  |
| 2419 | **RHD4-02-002-L014-(ST)-GRP Pipes - 1100 mm diameter** | 2026-10-13 → 2026-08-05 (-69d) | 2026-10-24 → 2027-03-23 (+150d) |  |  |  |  |
| RHD4CZ4L014ST1107 | Excavation works for GRP Pipe Line 1100 mm - (RD-L-14)-Z4-L014-ST | 2026-10-13 → 2026-08-05 A (-69d) | 2026-10-14 → 2026-08-08 A (-67d) |  | 0% → 100% |  |  |
| RHD4CZ4L014ST1207 | Bedding works for GRP Pipe Line 1100 mm - (RD-L-14)-Z4-L014-ST | 2026-10-15 → 2026-08-08 A (-68d) | 2026-10-17 → 2026-08-09 A (-69d) |  | 0% → 100% |  |  |
| RHD4CZ4L014ST1307 | Installing for GRP Pipe Line 1100 mm - (RD-L-14)-Z4-L014-ST | 2026-10-18 → 2026-09-15 A (-33d) | 2026-10-19 → 2027-03-18 (+150d) |  | 0% → 50% |  |  |
| RHD4CZ4L014ST1407 | Primary Test for GRP Pipe Line 1100 mm - (RD-L-14)-Z4-L014-ST | 2026-10-20 → 2027-03-20 (+151d) | 2026-10-21 → 2027-03-21 (+151d) |  |  |  |  |
| RHD4CZ4L014ST1507 | Backfilling and warning tape works for GRP Pipe Line 1100 mm - (RD-L-14)-Z4-L014-ST | 2026-10-22 → 2027-03-22 (+151d) | 2026-10-24 → 2027-03-23 (+150d) |  |  |  |  |
| 2418 | **RHD4-02-002-L014-(ST)-GRP Pipes - 1000 mm diameter** | 2026-10-15 → 2026-08-06 (-70d) | 2026-10-26 → 2027-03-25 (+150d) |  |  |  |  |
| RHD4CZ4L014ST1106 | Excavation works for GRP Pipe Line 1000 mm - (RD-L-14)-Z4-L014-ST | 2026-10-15 → 2026-08-06 A (-70d) | 2026-10-17 → 2026-08-08 A (-70d) |  | 0% → 100% |  |  |
| RHD4CZ4L014ST1206 | Bedding works for GRP Pipe Line 1000 mm - (RD-L-14)-Z4-L014-ST | 2026-10-18 → 2026-08-08 A (-71d) | 2026-10-19 → 2026-08-09 A (-71d) |  | 0% → 100% |  |  |
| RHD4CZ4L014ST1306 | Installing for GRP Pipe Line 1000 mm - (RD-L-14)-Z4-L014-ST | 2026-10-20 → 2026-08-09 A (-72d) | 2026-10-21 → 2026-08-10 A (-72d) |  | 0% → 100% |  |  |
| RHD4CZ4L014ST1406 | Primary Test for GRP Pipe Line 1000 mm - (RD-L-14)-Z4-L014-ST | 2026-10-22 → 2027-03-22 (+151d) | 2026-10-24 → 2027-03-23 (+150d) |  |  |  |  |
| RHD4CZ4L014ST1506 | Backfilling and warning tape works for GRP Pipe Line 1000 mm - (RD-L-14)-Z4-L014-ST | 2026-10-25 → 2027-03-24 (+150d) | 2026-10-26 → 2027-03-25 (+150d) |  |  |  |  |
| 2417 | **RHD4-02-002-L014-(ST)-GRP Pipes - 900 mm diameter** | 2026-10-18 → 2026-08-06 (-73d) | 2026-10-28 → 2027-04-07 (+161d) |  |  |  |  |
| RHD4CZ4L014ST1105 | Excavation works for GRP Pipe Line 900 mm - (RD-L-14)-Z4-L014-ST | 2026-10-18 → 2026-08-06 A (-73d) | 2026-10-19 → 2026-08-08 A (-72d) |  | 0% → 100% |  |  |
| RHD4CZ4L014ST1205 | Bedding works for GRP Pipe Line 900 mm - (RD-L-14)-Z4-L014-ST | 2026-10-20 → 2026-08-08 A (-73d) | 2026-10-21 → 2026-08-10 A (-72d) |  | 0% → 100% |  |  |
| RHD4CZ4L014ST1305 | Installing for GRP Pipe Line 900 mm - (RD-L-14)-Z4-L014-ST | 2026-10-22 → 2026-08-10 A (-73d) | 2026-10-24 → 2026-08-12 A (-73d) |  | 0% → 100% |  |  |
| RHD4CZ4L014ST1405 | Primary Test for GRP Pipe Line 900 mm - (RD-L-14)-Z4-L014-ST | 2026-10-25 → 2027-04-04 (+161d) | 2026-10-26 → 2027-04-05 (+161d) |  |  |  |  |
| RHD4CZ4L014ST1505 | Backfilling and warning tape works for GRP Pipe Line 900 mm - (RD-L-14)-Z4-L014-ST | 2026-10-27 → 2027-04-06 (+161d) | 2026-10-28 → 2027-04-07 (+161d) |  |  |  |  |

| ID | Task | Start | Finish | Complete | Other |
| --- | --- | --- | --- | --- | --- |
| 2413 | **RHD4-02-002-L014-(ST)-GRP Pipes - 500 mm diameter** | 2026-10-20 → 2026-08-04 (-77d) | 2026-10-31 → 2027-03-20 (+140d) |  |  |
| RHD4CZ4L014ST1101 | Excavation works for GRP Pipe Line 500 mm - (RD-L-14)-Z4-L014-ST | 2026-10-20 → 2026-08-04 A (-77d) | 2026-10-21 → 2026-08-06 A (-76d) | 0% → 100% |  |
| RHD4CZ4L014ST1201 | Bedding works for GRP Pipe Line 500 mm - (RD-L-14)-Z4-L014-ST | 2026-10-22 → 2026-08-06 A (-77d) | 2026-10-24 → 2026-08-08 A (-77d) | 0% → 100% |  |
| RHD4CZ4L014ST1301 | Installing for GRP Pipe Line 500 mm - (RD-L-14)-Z4-L014-ST | 2026-10-25 → 2026-08-08 A (-78d) | 2026-10-26 → 2026-08-10 A (-77d) | 0% → 100% |  |
| RHD4CZ4L014ST1501 | Backfilling and warning tape works for GRP Pipe Line 500 mm - (RD-L-14)-Z4-L014-ST | 2026-10-29 → 2026-08-22 A (-68d) | 2026-10-31 → 2026-08-23 A (-69d) | 0% → 100% | resources Skilled labor [3.27 h]; Unskilled Labor [6.43 h]; Equipment Opreator [6.43 h]; Excavator-Poclain [3.27 h]; Dump Truck [3.27 h]; GRP (500mm Diameter) - ST - Depth less than 1.5 m [11.87 m] → Skilled labor [3.27 h]; Unskilled Labor [6.4 h]; Equipment Opreator [6.4 h]; Excavator-Poclain [3.27 h]; Dump Truck [3.27 h]; GRP (500mm Diameter) - ST - Depth less than 1.5 m [11.87 m] |
| RHD4CZ4L014ST1401 | Primary Test for GRP Pipe Line 500 mm - (RD-L-14)-Z4-L014-ST | 2026-10-27 → 2027-03-18 (+142d) | 2026-10-28 → 2027-03-20 (+143d) |  |  |
| 2412 | **RHD4-02-002-L014-(ST)-GRP Pipes - 400 mm diameter** | 2026-10-22 → 2026-08-04 (-79d) | 2026-11-02 → 2027-03-29 (+147d) |  |  |
| RHD4CZ4L014ST1100 | Excavation works for GRP Pipe Line 400 mm - (RD-L-14)-Z4-L014-ST | 2026-10-22 → 2026-08-04 A (-79d) | 2026-10-24 → 2027-03-20 (+147d) | 0% → 30% | resources Skilled labor [9.91 h]; Unskilled Labor [9.91 h]; Equipment Opreator [11.98 h]; Excavator-Poclain [9.91 h]; Dump Truck [1.96 h]; GRP (400mm Diameter) - ST - Depth less than 1.5 m [22.84 m] → Skilled labor [9.91 h]; Unskilled Labor [9.91 h]; Equipment Opreator [12 h]; Excavator-Poclain [9.91 h]; Dump Truck [1.96 h]; GRP (400mm Diameter) - ST - Depth less than 1.5 m [22.84 m] |
| RHD4CZ4L014ST1200 | Bedding works for GRP Pipe Line 400 mm - (RD-L-14)-Z4-L014-ST | 2026-10-25 → 2027-03-21 (+147d) | 2026-10-26 → 2027-03-22 (+147d) |  |  |
| RHD4CZ4L014ST1300 | Installing for GRP Pipe Line 400 mm - (RD-L-14)-Z4-L014-ST | 2026-10-27 → 2027-03-23 (+147d) | 2026-10-28 → 2027-03-24 (+147d) |  |  |
| RHD4CZ4L014ST1400 | Primary Test for GRP Pipe Line 400 mm - (RD-L-14)-Z4-L014-ST | 2026-10-29 → 2027-03-25 (+147d) | 2026-10-31 → 2027-03-27 (+147d) |  |  |
| RHD4CZ4L014ST1500 | Backfilling and warning tape works for GRP Pipe Line 400 mm - (RD-L-14)-Z4-L014-ST | 2026-11-01 → 2027-03-28 (+147d) | 2026-11-02 → 2027-03-29 (+147d) |  | resources Skilled labor [12.41 h]; Unskilled Labor [24.83 h]; Equipment Opreator [24.83 h]; Excavator-Poclain [12.41 h]; Dump Truck [12.41 h]; GRP (400mm Diameter) - ST - Depth less than 1.5 m [45.67 m] → Skilled labor [12.41 h]; Unskilled Labor [24.8 h]; Equipment Opreator [24.8 h]; Excavator-Poclain [12.41 h]; Dump Truck [12.41 h]; GRP (400mm Diameter) - ST - Depth less than 1.5 m [45.67 m] |
| 2426 | **RHD4-02-002-L014-(ST)-UPVC Pipes - 300 mm diameter** | 2026-11-01 → 2027-04-05 (+155d) | 2026-11-19 → 2027-04-24 (+156d) |  |  |
| RHD4CZ4L014ST2100 | Excavation works for UPVC Pipe Line 300 mm - (RD-L-14)-Z4-L014-ST | 2026-11-01 → 2027-04-05 (+155d) | 2026-11-04 → 2027-04-08 (+155d) |  |  |
| RHD4CZ4L014ST2200 | Bedding works for UPVC Pipe Line 300 mm - (RD-L-14)-Z4-L014-ST | 2026-11-05 → 2027-04-10 (+156d) | 2026-11-08 → 2027-04-12 (+155d) |  |  |
| RHD4CZ4L014ST2300 | Installing for UPVC Pipe Line 300 mm - (RD-L-14)-Z4-L014-ST | 2026-11-09 → 2027-04-13 (+155d) | 2026-11-12 → 2027-04-17 (+156d) |  |  |
| RHD4CZ4L014ST2400 | Primary Test for UPVC Pipe Line 300 mm - (RD-L-14)-Z4-L014-ST | 2026-11-14 → 2027-04-18 (+155d) | 2026-11-15 → 2027-04-19 (+155d) |  |  |
| RHD4CZ4L014ST2500 | Backfilling and warning tape works for UPVC Pipe Line 300 mm - (RD-L-14)-Z4-L014-ST | 2026-11-16 → 2027-04-20 (+155d) | 2026-11-19 → 2027-04-24 (+156d) |  |  |
| 2434 | **RHD4-02-002-L014-(ST)-Concrete Encasement** | 2026-11-11 → 2027-04-15 (+155d) | 2026-11-12 → 2027-04-17 (+156d) |  |  |
| RHD4CZ4L014ST6100 | Pipe Encasement for Storm Pipelines - (RD-L-14)-Z4-L014-ST | 2026-11-11 → 2027-04-15 (+155d) | 2026-11-12 → 2027-04-17 (+156d) |  | resources Skilled labor [4.03 h]; Unskilled Labor [4.03 h]; Equipment Opreator [4.47 h]; Concrete Mixer Truck [0.44 h]; Dump Truck [4.03 h]; Pipe Encasement - ST [74.22 m3] → Skilled labor [4 h]; Unskilled Labor [4 h]; Equipment Opreator [4.47 h]; Concrete Mixer Truck [0.44 h]; Dump Truck [4 h]; Pipe Encasement - ST [74.22 m3] |
| 2435 | **RHD4-02-002-Z4-L014-Catch Basin - ST** | 2026-11-01 → 2026-10-27 (-5d) | 2026-12-07 → 2027-05-11 (+155d) |  |  |
| 2436 | **RHD4-02-002-L014-(ST)-Single Catch Basin Works** | 2026-11-01 → 2026-10-27 (-5d) | 2026-12-05 → 2027-05-09 (+155d) |  |  |
| RHD4CZ4L014ST7100 | Excavation works for Single Catch Basin - (RD-L-14)-Z4-L014-ST | 2026-11-01 → 2026-10-27 A (-5d) | 2026-11-05 → 2027-04-10 (+156d) | 0% → 2% |  |
| RHD4CZ4L014ST7200 | PC Blinding, Installation and Pipe connection for Single Catch Basin - (RD-L-14)-Z4-L014-ST | 2026-11-07 → 2026-10-29 A (-9d) | 2026-11-11 → 2027-04-15 (+155d) | 0% → 2% |  |
| RHD4CZ4L014ST7300 | Rings & C.Slab & Final Backfill for Single Catch Basin - (RD-L-14)-Z4-L014-ST | 2026-11-12 → 2026-10-31 A (-12d) | 2026-11-18 → 2027-04-22 (+155d) | 0% → 2% |  |
| RHD4CZ4L014ST7400 | Steel Cover for Single Catch Basin - (RD-L-14)-Z4-L014-ST | 2026-11-19 → 2027-04-24 (+156d) | 2026-11-24 → 2027-04-28 (+155d) |  |  |
| RHD4CZ4L014ST7500 | Finishing and Insulation works for Single Catch Basin - (RD-L-14)-Z4-L014-ST | 2026-11-25 → 2027-04-29 (+155d) | 2026-12-05 → 2027-05-09 (+155d) |  |  |
| 2437 | **RHD4-02-002-L014-(ST)-Double Catch Basin Works** | 2026-11-07 → 2027-04-11 (+155d) | 2026-12-07 → 2027-05-11 (+155d) |  |  |
| RHD4CZ4L014ST8100 | Excavation works for Double Catch Basin - (RD-L-14)-Z4-L014-ST | 2026-11-07 → 2027-04-11 (+155d) | 2026-11-08 → 2027-04-12 (+155d) |  |  |
| RHD4CZ4L014ST8200 | PC Blinding, Installation and Pipe connection for Double Catch Basin - (RD-L-14)-Z4-L014-ST | 2026-11-12 → 2027-04-17 (+156d) | 2026-11-14 → 2027-04-18 (+155d) |  |  |
| RHD4CZ4L014ST8300 | Rings & C.Slab & Final Backfillfor Double Catch Basin - (RD-L-14)-Z4-L014-ST | 2026-11-19 → 2027-04-24 (+156d) | 2026-11-21 → 2027-04-25 (+155d) |  |  |
| RHD4CZ4L014ST8400 | Steel Cover for Double Catch Basin - (RD-L-14)-Z4-L014-ST | 2026-11-25 → 2027-04-29 (+155d) | 2026-11-26 → 2027-05-01 (+156d) |  |  |
| RHD4CZ4L014ST8500 | Finishing and Insulation works for Double Catch Basin - (RD-L-14)-Z4-L014-ST | 2026-12-06 → 2027-05-10 (+155d) | 2026-12-07 → 2027-05-11 (+155d) |  |  |
| 2460 | **RHD4-02-002-Z4-L014-Sewage Network - SW** | 2026-11-05 → 2026-08-11 (-86d) | 2027-01-24 → 2027-06-29 (+156d) |  |  |
| 5307 | **RHD4-02-002-L014-(SW)-MH Works - 1200 mm diameter** | 2026-11-05 → 2026-08-15 (-82d) | 2027-01-24 → 2027-06-29 (+156d) |  |  |
| RHD4CZ4L014SW3100 | Excavation and PC Blinding works for MH 1200 mm - (RD-L-14)-Z4-L014-SW | 2026-11-05 → 2026-08-15 A (-82d) | 2026-11-16 → 2027-04-20 (+155d) | 0% → 70% | resources Skilled labor [107.05 h]; Unskilled Labor [107.05 h]; Equipment Opreator [171.31 h]; Excavator-Poclain [107.05 h]; Water Truck [10.67 h]; Dump Truck [53.58 h]; MH (1200mm Diameter) - SW - depth 0 - 1.5m [1.75 nr]; MH (1200mm Diameter) - SW - depth 1.51 - 2.5m [0.75 nr]; MH (1200mm Diameter) - SW - depth 2.51 - 3.5m [2.25 nr]; MH (1200mm Diameter) - SW - depth 3.51 -4.5m [0.75 nr] → Skilled labor [107.05 h]; Unskilled Labor [107.05 h]; Equipment Opreator [171.31 h]; Excavator-Poclain [107.05 h]; Water Truck [10.67 h]; Dump Truck [53.6 h]; MH (1200mm Diameter) - SW - depth 0 - 1.5m [1.75 nr]; MH (1200mm Diameter) - SW - depth 1.51 - 2.5m [0.75 nr]; MH (1200mm Diameter) - SW - depth 2.51 - 3.5m [2.25 nr]; MH (1200mm Diameter) - SW - depth 3.51 -4.5m [0.75 nr] |
| RHD4CZ4L014SW3200 | Installation of Base for MH 1200 mm - (RD-L-14)-Z4-L014-SW | 2026-11-17 → 2026-09-20 A (-58d) | 2026-12-06 → 2027-04-26 (+141d) | 0% → 23% |  |
| RHD4CZ4L014SW3300 | MH Ring and C.Slab works and Backfilling works for MH 1200 mm - (RD-L-14)-Z4-L014-SW | 2026-12-07 → 2027-04-27 (+141d) | 2026-12-26 → 2027-05-20 (+145d) |  |  |
| RHD4CZ4L014SW3400 | Steel Cover for MH 1200 mm - (RD-L-14)-Z4-L014-SW | 2026-12-27 → 2027-05-22 (+146d) | 2027-01-04 → 2027-05-30 (+146d) |  | resources Skilled labor [79.83 h]; Unskilled Labor [159.76 h]; Equipment Opreator [16.01 h]; Boom Truck [16.01 h]; MH (1200mm Diameter) - SW - depth 0 - 1.5m [0.35 nr]; MH (1200mm Diameter) - SW - depth 1.51 - 2.5m [0.15 nr]; MH (1200mm Diameter) - SW - depth 2.51 - 3.5m [0.45 nr]; MH (1200mm Diameter) - SW - depth 3.51 -4.5m [0.15 nr] → Skilled labor [79.83 h]; Unskilled Labor [159.76 h]; Equipment Opreator [16 h]; Boom Truck [16 h]; MH (1200mm Diameter) - SW - depth 0 - 1.5m [0.35 nr]; MH (1200mm Diameter) - SW - depth 1.51 - 2.5m [0.15 nr]; MH (1200mm Diameter) - SW - depth 2.51 - 3.5m [0.45 nr]; MH (1200mm Diameter) - SW - depth 3.51 -4.5m [0.15 nr] |
| RHD4CZ4L014SW3500 | Finishing, Benching, Testing works for MH 1200 mm - (RD-L-14)-Z4-L014-SW | 2027-01-05 → 2027-06-10 (+156d) | 2027-01-24 → 2027-06-29 (+156d) |  |  |
| 1325 | **RHD4-02-002-L014-(SW)-GRP Pipes - 300 mm diameter** | 2026-11-05 → 2026-08-11 (-86d) | 2026-12-27 → 2027-05-10 (+134d) |  |  |
| RHD4CZ4L014SW1100 | Excavation works for GRP Pipe Line 300 mm - (RD-L-14)-Z4-L014-SW | 2026-11-05 → 2026-08-11 A (-86d) | 2026-11-15 → 2026-08-15 A (-92d) | 0% → 100% | resources Skilled labor [94.09 h]; Unskilled Labor [94.09 h]; Equipment Opreator [112.82 h]; Excavator-Poclain [94.09 h]; Dump Truck [18.84 h]; GRP (300mm Diameter) - SW - Depth: 1.51m - 2.5m [70.72 m]; GRP (300mm Diameter) - SW - Depth: 2.51m - 3.5m [123.62 m]; GRP (300mm Diameter) - SW - Depth: 3.51m - 4.5m [14.81 m] → Skilled labor [94.09 h]; Unskilled Labor [94.09 h]; Equipment Opreator [112.8 h]; Excavator-Poclain [94.09 h]; Dump Truck [18.84 h]; GRP (300mm Diameter) - SW - Depth: 1.51m - 2.5m [70.72 m]; GRP (300mm Diameter) - SW - Depth: 2.51m - 3.5m [123.62 m]; GRP (300mm Diameter) - SW - Depth: 3.51m - 4.5m [14.81 m] |
| RHD4CZ4L014SW1200 | Bedding works for GRP Pipe Line 300 mm - (RD-L-14)-Z4-L014-SW | 2026-11-16 → 2026-08-12 A (-96d) | 2026-11-25 → 2026-08-17 A (-100d) | 0% → 100% |  |
| RHD4CZ4L014SW1300 | Installing for GRP Pipe Line 300 mm - (RD-L-14)-Z4-L014-SW | 2026-11-26 → 2026-08-15 A (-103d) | 2026-12-06 → 2026-09-16 A (-81d) | 0% → 100% |  |
| RHD4CZ4L014SW1400 | Primary Test for GRP Pipe Line 300 mm - (RD-L-14)-Z4-L014-SW | 2026-12-07 → 2027-04-10 (+124d) | 2026-12-16 → 2027-04-19 (+124d) |  |  |
| RHD4CZ4L014SW1500 | Backfilling and warning tape works for GRP Pipe Line 300 mm - (RD-L-14)-Z4-L014-SW | 2026-12-17 → 2027-05-01 (+135d) | 2026-12-27 → 2027-05-10 (+134d) |  |  |
| 957 | **RHD4-02-002-L014-(SW)-MH Works - 1200 mm diameter with Back drop** | 2026-11-05 → 2026-08-15 (-82d) | 2026-11-30 → 2027-04-29 (+150d) |  |  |
| RHD4CZ4L014SW3101 | Excavation and PC Blinding works for MH 1200 mm - (RD-L-14)-Z4-L014-SW | 2026-11-05 → 2026-08-15 A (-82d) | 2026-11-09 → 2026-08-18 A (-83d) | 0% → 100% |  |
| RHD4CZ4L014SW3201 | Installation of Base for MH 1200 mm - (RD-L-14)-Z4-L014-SW | 2026-11-10 → 2026-08-17 A (-85d) | 2026-11-15 → 2027-04-14 (+150d) | 0% → 30% |  |
| RHD4CZ4L014SW3301 | MH Ring and C.Slab works and Backfilling works for MH 1200 mm - (RD-L-14)-Z4-L014-SW | 2026-11-16 → 2027-04-15 (+150d) | 2026-11-21 → 2027-04-20 (+150d) |  |  |
| RHD4CZ4L014SW3401 | Steel Cover for MH 1200 mm - (RD-L-14)-Z4-L014-SW | 2026-11-22 → 2027-04-21 (+150d) | 2026-11-24 → 2027-04-24 (+151d) |  |  |
| RHD4CZ4L014SW3501 | Finishing, Benching, Testing works for MH 1200 mm - (RD-L-14)-Z4-L014-SW | 2026-11-25 → 2027-04-25 (+151d) | 2026-11-30 → 2027-04-29 (+150d) |  |  |
| 2466 | **RHD4-02-002-L014-(SW)-UPVC Pipes - 200 mm diameter** | 2026-11-05 → 2026-08-11 (-86d) | 2026-11-18 → 2027-04-22 (+155d) |  |  |
| RHD4CZ4L014SW2100 | Excavation works for UPVC Pipe Line 200 mm - (RD-L-14)-Z4-L014-SW | 2026-11-05 → 2026-08-11 A (-86d) | 2026-11-07 → 2027-04-11 (+155d) | 0% → 91% | resources Skilled labor [19.93 h]; Unskilled Labor [19.93 h]; Equipment Opreator [23.85 h]; Excavator-Poclain [19.93 h]; Dump Truck [4.03 h]; UPVC (200mm Diameter) - SW - Depth: less than 1.5m [18.45 m]; UPVC (200mm Diameter) - SW - Depth: 1.51m - 2.5m [26.77 m]; UPVC (200mm Diameter) - SW - Depth: 2.51m - 3.5m [4.4 m] → Skilled labor [19.93 h]; Unskilled Labor [19.93 h]; Equipment Opreator [23.85 h]; Excavator-Poclain [19.93 h]; Dump Truck [4 h]; UPVC (200mm Diameter) - SW - Depth: less than 1.5m [18.45 m]; UPVC (200mm Diameter) - SW - Depth: 1.51m - 2.5m [26.77 m]; UPVC (200mm Diameter) - SW - Depth: 2.51m - 3.5m [4.4 m] |
| RHD4CZ4L014SW2200 | Bedding works for UPVC Pipe Line 200 mm - (RD-L-14)-Z4-L014-SW | 2026-11-08 → 2026-08-13 A (-87d) | 2026-11-09 → 2027-04-13 (+155d) | 0% → 92% |  |
| RHD4CZ4L014SW2300 | Installing for UPVC Pipe Line 200 mm - (RD-L-14)-Z4-L014-SW | 2026-11-10 → 2026-09-15 A (-56d) | 2026-11-12 → 2027-04-17 (+156d) | 0% → 92% |  |
| RHD4CZ4L014SW2500 | Backfilling and warning tape works for UPVC Pipe Line 200 mm - (RD-L-14)-Z4-L014-SW | 2026-11-16 → 2026-09-24 A (-53d) | 2026-11-18 → 2027-04-22 (+155d) | 0% → 92% |  |
| RHD4CZ4L014SW2400 | Primary Test for UPVC Pipe Line 200 mm - (RD-L-14)-Z4-L014-SW | 2026-11-14 → 2027-04-18 (+155d) | 2026-11-15 → 2027-04-19 (+155d) |  |  |
| 2497 | **RHD4-02-002-Z4-L014-Potable Network - PT** | 2026-12-06 → 2027-05-11 (+156d) | 2027-03-06 → 2027-08-12 (+159d) |  |  |
| 2498 | **RHD4-02-002-L014-(PT)-HDPE Pipes - 110 mm diameter** | 2026-12-06 → 2027-05-11 (+156d) | 2026-12-16 → 2027-05-26 (+161d) |  |  |
| RHD4CZ4L014PT1100 | Excavation works for HDPE Pipline 110 mm - (RD-L-14)-Z4-L014-PT | 2026-12-06 → 2027-05-11 (+156d) | 2026-12-07 → 2027-05-12 (+156d) |  |  |
| RHD4CZ4L014PT1200 | Bedding works for HDPE Pipline 110 mm - (RD-L-14)-Z4-L014-PT | 2026-12-08 → 2027-05-13 (+156d) | 2026-12-09 → 2027-05-19 (+161d) |  |  |
| RHD4CZ4L014PT1300 | Installing for HDPE Pipline 110 mm - (RD-L-14)-Z4-L014-PT | 2026-12-10 → 2027-05-20 (+161d) | 2026-12-12 → 2027-05-22 (+161d) |  |  |
| RHD4CZ4L014PT1400 | Primary Test for HDPE Pipline 110 mm - (RD-L-14)-Z4-L014-PT | 2026-12-13 → 2027-05-23 (+161d) | 2026-12-14 → 2027-05-24 (+161d) |  |  |
| RHD4CZ4L014PT1500 | Backfilling and warning tape works for HDPE Pipline 110 mm - (RD-L-14)-Z4-L014-PT | 2026-12-15 → 2027-05-25 (+161d) | 2026-12-16 → 2027-05-26 (+161d) |  |  |
| 2499 | **RHD4-02-002-L014-(PT)-HDPE Pipes - 160 mm diameter** | 2026-12-08 → 2027-05-13 (+156d) | 2027-01-28 → 2027-07-08 (+161d) |  |  |
| RHD4CZ4L014PT1101 | Excavation works for HDPE Pipline 160 mm - (RD-L-14)-Z4-L014-PT | 2026-12-08 → 2027-05-13 (+156d) | 2026-12-17 → 2027-05-27 (+161d) |  |  |
| RHD4CZ4L014PT1201 | Bedding works for HDPE Pipline 160 mm - (RD-L-14)-Z4-L014-PT | 2026-12-19 → 2027-05-29 (+161d) | 2026-12-28 → 2027-06-07 (+161d) |  |  |
| RHD4CZ4L014PT1301 | Installing for HDPE Pipline 160 mm - (RD-L-14)-Z4-L014-PT | 2026-12-29 → 2027-06-08 (+161d) | 2027-01-07 → 2027-06-17 (+161d) |  |  |
| RHD4CZ4L014PT1401 | Primary Test for HDPE Pipline 160 mm - (RD-L-14)-Z4-L014-PT | 2027-01-09 → 2027-06-19 (+161d) | 2027-01-18 → 2027-06-28 (+161d) |  |  |

| ID | Task | Start | Finish | Other |
| --- | --- | --- | --- | --- |
| RHD4CZ4L014PT1501 | Backfilling and warning tape works for HDPE Pipline 160 mm - (RD-L-14)-Z4-L014-PT | 2027-01-19 → 2027-06-29 (+161d) | 2027-01-28 → 2027-07-08 (+161d) |  |
| 2503 | **RHD4-02-002-L014-(PT)-Gate Valves (Direct Buried)** | 2027-01-05 → 2027-06-15 (+161d) | 2027-02-01 → 2027-07-12 (+161d) |  |
| RHD4CZ4L014PT3100 | Installation for Direct Buried Gate Valves - (RD-L-14)-Z4-L014-PT | 2027-01-05 → 2027-06-15 (+161d) | 2027-01-07 → 2027-06-17 (+161d) |  |
| RHD4CZ4L014PT3200 | Stem and Service box for Direct Buried Gate Valves - (RD-L-14)-Z4-L014-PT | 2027-01-30 → 2027-07-10 (+161d) | 2027-02-01 → 2027-07-12 (+161d) |  |
| 2506 | **RHD4-02-002-L014-(PT)-Wash out Valve Chambers** | 2026-12-08 → 2027-05-13 (+156d) | 2026-12-16 → 2027-05-26 (+161d) |  |
| RHD4CZ4L014PT2101 | Excavation and Bedding for Wash out Valve Chambers for Potable Water Network - (RD-L-14)-Z4-L014-PT | 2026-12-08 → 2027-05-13 (+156d) | 2026-12-09 → 2027-05-19 (+161d) |  |
| RHD4CZ4L014PT2201 | PC works for Wash out Valve Chambers for Potable Water Network - (RD-L-14)-Z4-L014-PT | 2026-12-10 → 2027-05-20 (+161d) | 2026-12-12 → 2027-05-22 (+161d) |  |
| RHD4CZ4L014PT2301 | Installation for Wash out Valve Chambers for Potable Water Network - (RD-L-14)-Z4-L014-PT | 2026-12-13 → 2027-05-23 (+161d) | 2026-12-14 → 2027-05-24 (+161d) |  |
| RHD4CZ4L014PT2401 | Backfilling works for Wash out Valve Chambers for Potable Water Network - (RD-L-14)-Z4-L014-PT | 2026-12-15 → 2027-05-25 (+161d) | 2026-12-16 → 2027-05-26 (+161d) |  |
| 2507 | **RHD4-02-002-L014-(PT)-Wash out Valves** | 2026-12-15 → 2027-05-25 (+161d) | 2026-12-19 → 2027-05-29 (+161d) |  |
| RHD4CZ4L014PT3102 | Installation for Wash out Valves for Potable Water Network - (RD-L-14)-Z4-L014-PT | 2026-12-15 → 2027-05-25 (+161d) | 2026-12-16 → 2027-05-26 (+161d) |  |
| RHD4CZ4L014PT3202 | Stem and Service box for Wash out Valves for Potable Water Network - (RD-L-14)-Z4-L014-PT | 2026-12-17 → 2027-05-27 (+161d) | 2026-12-19 → 2027-05-29 (+161d) |  |
| 2508 | **RHD4-02-002-L014-(PT)-Air Valve Chambers** | 2026-12-10 → 2027-05-20 (+161d) | 2026-12-19 → 2027-05-29 (+161d) |  |
| RHD4CZ4L014PT2102 | Excavation and Bedding for Air Valve Chambers for Potable Water Network - (RD-L-14)-Z4-L014-PT | 2026-12-10 → 2027-05-20 (+161d) | 2026-12-12 → 2027-05-22 (+161d) |  |
| RHD4CZ4L014PT2202 | PC works for Air Valve Chambers for Potable Water Network - (RD-L-14)-Z4-L014-PT | 2026-12-13 → 2027-05-23 (+161d) | 2026-12-14 → 2027-05-24 (+161d) |  |
| RHD4CZ4L014PT2302 | Installation for Air Valve Chambers for Potable Water Network - (RD-L-14)-Z4-L014-PT | 2026-12-15 → 2027-05-25 (+161d) | 2026-12-16 → 2027-05-26 (+161d) |  |
| RHD4CZ4L014PT2402 | Backfilling works for Air Valve Chambers for Potable Water Network - (RD-L-14)-Z4-L014-PT | 2026-12-17 → 2027-05-27 (+161d) | 2026-12-19 → 2027-05-29 (+161d) |  |
| 2509 | **RHD4-02-002-L014-(PT)-Air Valves** | 2026-12-17 → 2027-05-27 (+161d) | 2026-12-21 → 2027-05-31 (+161d) |  |
| RHD4CZ4L014PT3103 | Installation for Air Valves for Potable Water Network - (RD-L-14)-Z4-L014-PT | 2026-12-17 → 2027-05-27 (+161d) | 2026-12-19 → 2027-05-29 (+161d) |  |
| RHD4CZ4L014PT3203 | Stem and Service box for Air Valves for Potable Water Network - (RD-L-14)-Z4-L014-PT | 2026-12-20 → 2027-05-30 (+161d) | 2026-12-21 → 2027-05-31 (+161d) |  |
| 2510 | **RHD4-02-002-L014-(PT)-Fire Hydrant** | 2027-01-30 → 2027-07-10 (+161d) | 2027-03-06 → 2027-08-12 (+159d) |  |
| RHD4CZ4L014PT4100 | Excavation and Bedding and Pipe Installation for Fire Hydrant - (RD-L-14)-Z4-L014-PT | 2027-01-30 → 2027-07-10 (+161d) | 2027-02-07 → 2027-07-18 (+161d) |  |
| RHD4CZ4L014PT4200 | Valve Installation for Fire Hydrant - (RD-L-14)-Z4-L014-PT | 2027-02-08 → 2027-07-19 (+161d) | 2027-02-14 → 2027-07-25 (+161d) |  |
| RHD4CZ4L014PT4300 | Stem for Fire Hydrant - (RD-L-14)-Z4-L014-PT | 2027-02-15 → 2027-07-26 (+161d) | 2027-02-21 → 2027-08-01 (+161d) |  |
| RHD4CZ4L014PT4400 | Fire Installation for Fire Hydrant - (RD-L-14)-Z4-L014-PT | 2027-02-23 → 2027-08-02 (+160d) | 2027-03-01 → 2027-08-08 (+160d) |  |
| RHD4CZ4L014PT4500 | Protection Barriers for Fire Hydrant - (RD-L-14)-Z4-L014-PT | 2027-03-02 → 2027-08-09 (+160d) | 2027-03-06 → 2027-08-12 (+159d) |  |
| 2512 | **RHD4-02-002-Z4-L014-Irrigation Network - IRR** | 2026-12-08 → 2027-05-13 (+156d) | 2027-02-01 → 2027-07-12 (+161d) |  |
| 2513 | **RHD4-02-002-L014-(IRR)-HDPE Pipes - 160 mm diameter** | 2026-12-19 → 2027-05-29 (+161d) | 2027-01-10 → 2027-06-20 (+161d) |  |
| RHD4CZ4L014IRR1100 | Excavation works for HDPE Pipline 160 mm - (RD-L-14)-Z4-L014-IRR | 2026-12-19 → 2027-05-29 (+161d) | 2026-12-23 → 2027-06-02 (+161d) |  |
| RHD4CZ4L014IRR1200 | Bedding works for HDPE Pipline 160 mm - (RD-L-14)-Z4-L014-IRR | 2026-12-24 → 2027-06-03 (+161d) | 2026-12-28 → 2027-06-07 (+161d) |  |
| RHD4CZ4L014IRR1300 | Installing for HDPE Pipline 160 mm - (RD-L-14)-Z4-L014-IRR | 2026-12-29 → 2027-06-08 (+161d) | 2027-01-03 → 2027-06-13 (+161d) |  |
| RHD4CZ4L014IRR1400 | Primary Test for HDPE Pipline 160 mm - (RD-L-14)-Z4-L014-IRR | 2027-01-04 → 2027-06-14 (+161d) | 2027-01-05 → 2027-06-15 (+161d) |  |
| RHD4CZ4L014IRR1500 | Backfilling and warning tape works for HDPE Pipline 160 mm - (RD-L-14)-Z4-L014-IRR | 2027-01-06 → 2027-06-16 (+161d) | 2027-01-10 → 2027-06-20 (+161d) |  |
| 1770 | **RHD4-02-002-L014-(IRR)-Air Valves** | 2026-12-29 → 2027-06-08 (+161d) | 2027-01-02 → 2027-06-12 (+161d) |  |
| RHD4CZ4L014IRR3103 | Installation for Air Valves for Irrigation Network - (RD-L-14)-Z4-L014-IRR | 2026-12-29 → 2027-06-08 (+161d) | 2026-12-30 → 2027-06-09 (+161d) |  |
| RHD4CZ4L014IRR3203 | Stem and Service box for Air Valves for Irrigation Network - (RD-L-14)-Z4-L014-IRR | 2026-12-31 → 2027-06-10 (+161d) | 2027-01-02 → 2027-06-12 (+161d) |  |
| 2516 | **RHD4-02-002-L014-(IRR)-HDPE Pipes - 250 mm diameter** | 2026-12-08 → 2027-05-13 (+156d) | 2027-02-01 → 2027-07-12 (+161d) |  |
| RHD4CZ4L014IRR1103 | Excavation works for HDPE Pipline 250 mm - (RD-L-14)-Z4-L014-IRR | 2026-12-08 → 2027-05-13 (+156d) | 2026-12-19 → 2027-05-29 (+161d) |  |
| RHD4CZ4L014IRR1203 | Bedding works for HDPE Pipline 250 mm - (RD-L-14)-Z4-L014-IRR | 2026-12-20 → 2027-05-30 (+161d) | 2026-12-28 → 2027-06-07 (+161d) |  |
| RHD4CZ4L014IRR1303 | Installing for HDPE Pipline 250 mm - (RD-L-14)-Z4-L014-IRR | 2026-12-29 → 2027-06-08 (+161d) | 2027-01-09 → 2027-06-19 (+161d) |  |
| RHD4CZ4L014IRR1403 | Primary Test for HDPE Pipline 250 mm - (RD-L-14)-Z4-L014-IRR | 2027-01-14 → 2027-06-24 (+161d) | 2027-01-23 → 2027-07-03 (+161d) |  |
| RHD4CZ4L014IRR1503 | Backfilling and warning tape works for HDPE Pipline 250 mm - (RD-L-14)-Z4-L014-IRR | 2027-01-24 → 2027-07-04 (+161d) | 2027-02-01 → 2027-07-12 (+161d) |  |
| 2521 | **RHD4-02-002-L014-(IRR)-Gate Valves (Direct Buried)** | 2027-01-05 → 2027-06-15 (+161d) | 2027-01-14 → 2027-06-24 (+161d) |  |
| RHD4CZ4L014IRR3100 | Installation for Direct Buried Gate Valves - (RD-L-14)-Z4-L014-IRR | 2027-01-05 → 2027-06-15 (+161d) | 2027-01-09 → 2027-06-19 (+161d) |  |
| RHD4CZ4L014IRR3200 | Stem and Service box for Direct Buried Gate Valves - (RD-L-14)-Z4-L014-IRR | 2027-01-11 → 2027-06-21 (+161d) | 2027-01-14 → 2027-06-24 (+161d) |  |
| 2528 | **RHD4-02-002-L014-(IRR)-Concrete Encasement** | 2026-12-29 → 2027-06-08 (+161d) | 2027-01-13 → 2027-06-23 (+161d) |  |
| RHD4CZ4L014IRR5100 | Pipe Encasement for Irrigation Pipelines - (RD-L-14)-Z4-L014-IRR | 2026-12-29 → 2027-06-08 (+161d) | 2027-01-13 → 2027-06-23 (+161d) |  |
| 6685 | **RHD4-02-002-L014-(IRR)-Wash out Chamber** | 2026-12-20 → 2027-05-30 (+161d) | 2026-12-28 → 2027-06-07 (+161d) |  |
| RHD4CZ4L014IRR2101 | Excavation and Bedding for Wash out Chamber for Irrigation Network - (RD-L-14)-Z4-L014-IRR | 2026-12-20 → 2027-05-30 (+161d) | 2026-12-21 → 2027-05-31 (+161d) |  |
| RHD4CZ4L014IRR2201 | PC works for Wash out Chamber for Irrigation Network - (RD-L-14)-Z4-L014-IRR | 2026-12-22 → 2027-06-01 (+161d) | 2026-12-23 → 2027-06-02 (+161d) |  |
| RHD4CZ4L014IRR2301 | Installation for Wash out Chamber for Irrigation Network - (RD-L-14)-Z4-L014-IRR | 2026-12-24 → 2027-06-03 (+161d) | 2026-12-26 → 2027-06-05 (+161d) |  |
| RHD4CZ4L014IRR2401 | Backfilling works for Wash out Chamber for Irrigation Network - (RD-L-14)-Z4-L014-IRR | 2026-12-27 → 2027-06-06 (+161d) | 2026-12-28 → 2027-06-07 (+161d) |  |
| 6686 | **RHD4-02-002-L014-(IRR)-Wash out Valves** | 2026-12-27 → 2027-06-06 (+161d) | 2026-12-30 → 2027-06-09 (+161d) |  |
| RHD4CZ4L014IRR3102 | Installation for Wash out Valve for Irrigation Network - (RD-L-14)-Z4-L014-IRR | 2026-12-27 → 2027-06-06 (+161d) | 2026-12-28 → 2027-06-07 (+161d) |  |
| RHD4CZ4L014IRR3202 | Stem and Service box for Wash out Valve for Irrigation Network - (RD-L-14)-Z4-L014-IRR | 2026-12-29 → 2027-06-08 (+161d) | 2026-12-30 → 2027-06-09 (+161d) |  |
| 1769 | **RHD4-02-002-L014-(IRR)-Air Valve Chamber** | 2026-12-22 → 2027-06-01 (+161d) | 2026-12-30 → 2027-06-09 (+161d) |  |
| RHD4CZ4L014IRR2102 | Excavation and Bedding for Valve Chamber for Irrigation Network - (RD-L-14)-Z4-L014-IRR | 2026-12-22 → 2027-06-01 (+161d) | 2026-12-23 → 2027-06-02 (+161d) |  |
| RHD4CZ4L014IRR2202 | PC works for Valve Chamber for Irrigation Network - (RD-L-14)-Z4-L014-IRR | 2026-12-24 → 2027-06-03 (+161d) | 2026-12-26 → 2027-06-05 (+161d) |  |
| RHD4CZ4L014IRR2302 | Installation for Valve Chamber for Irrigation Network - (RD-L-14)-Z4-L014-IRR | 2026-12-27 → 2027-06-06 (+161d) | 2026-12-28 → 2027-06-07 (+161d) |  |
| RHD4CZ4L014IRR2402 | Backfilling works for Valve Chamber for Irrigation Network - (RD-L-14)-Z4-L014-IRR | 2026-12-29 → 2027-06-08 (+161d) | 2026-12-30 → 2027-06-09 (+161d) |  |
| 2546 | **RHD4-02-002-Z4-L014-Medium Voltage Network - MV** | 2026-12-29 → 2027-06-08 (+161d) | 2027-02-11 → 2027-08-11 (+181d) |  |
| 2547 | **RHD4-02-002-L014-(MV)-Medium Voltage cable trench** | 2026-12-29 → 2027-06-08 (+161d) | 2027-01-27 → 2027-07-21 (+175d) |  |
| RHD4CZ4L014MV1100 | Excavation for Medium Voltage Trench - (RD-L-14)-Z4-L014-MV | 2026-12-29 → 2027-06-08 (+161d) | 2027-01-06 → 2027-06-16 (+161d) |  |
| RHD4CZ4L014MV1200 | Trench Backfilling for Medium Voltage Network - (RD-L-14)-Z4-L014-MV | 2027-01-19 → 2027-07-13 (+175d) | 2027-01-27 → 2027-07-21 (+175d) |  |
| 2548 | **RHD4-02-002-L014-(MV)-Medium Voltage duct banks** | 2027-01-07 → 2027-06-17 (+161d) | 2027-01-20 → 2027-06-30 (+161d) |  |
| RHD4CZ4L014MV2100 | Excavation of Duct Banks for Medium Voltage Network - (RD-L-14)-Z4-L014-MV | 2027-01-07 → 2027-06-17 (+161d) | 2027-01-10 → 2027-06-20 (+161d) |  |
| RHD4CZ4L014MV2200 | Installation of Duct Banks for Medium Voltage Network - (RD-L-14)-Z4-L014-MV | 2027-01-11 → 2027-06-21 (+161d) | 2027-01-14 → 2027-06-24 (+161d) | resources Unskilled Labor [38.01 h]; Equipment Opreator [76.01 h]; Excavator-Poclain [38.01 h]; Dump Truck [38.01 h]; Duct bank for MV cables UPVC (4xø150mm) [1.86 m]; Duct bank for MV cables UPVC (6xø150mm) [1.62 m] → Unskilled Labor [38.01 h]; Equipment Opreator [76 h]; Excavator-Poclain [38.01 h]; Dump Truck [38.01 h]; Duct bank for MV cables UPVC (4xø150mm) [1.86 m]; Duct bank for MV cables UPVC (6xø150mm) [1.62 m] |
| RHD4CZ4L014MV2300 | Pouring of Duct Banks for Medium Voltage Network - (RD-L-14)-Z4-L014-MV | 2027-01-16 → 2027-06-26 (+161d) | 2027-01-18 → 2027-06-28 (+161d) |  |
| RHD4CZ4L014MV2400 | Backfilling of Duct Banks for Medium Voltage Network - (RD-L-14)-Z4-L014-MV | 2027-01-19 → 2027-06-29 (+161d) | 2027-01-20 → 2027-06-30 (+161d) |  |
| 2549 | **RHD4-02-002-L014-(MV)-Medium Voltage cables 3Cx 500 mm²** | 2027-01-07 → 2027-06-17 (+161d) | 2027-02-04 → 2027-08-11 (+188d) |  |

| ID | Task | Start | Finish | Duration | Other |
| --- | --- | --- | --- | --- | --- |
| RHD4CZ4L014MV3100 | Installation of Medium Voltage Cables 3Cx 500 mm² - (RD-L-14)-Z4-L014-MV | 2027-01-07 → 2027-06-17 (+161d) | 2027-01-12 → 2027-07-05 (+174d) | 5d → 16d |  |
| RHD4CZ4L014MV3200 | Joints Installation of Medium Voltage Cables 3Cx 500 mm² - (RD-L-14)-Z4-L014-MV | 2027-01-13 → 2027-07-06 (+174d) | 2027-01-18 → 2027-07-12 (+175d) | 5d → 6d |  |
| RHD4CZ4L014MV3300 | Testing of Medium Voltage Cables 3Cx 500 mm² - (RD-L-14)-Z4-L014-MV | 2027-01-28 → 2027-07-22 (+175d) | 2027-02-02 → 2027-08-09 (+188d) | 5d → 16d |  |
| RHD4CZ4L014MV3400 | Termination of Medium Voltage Cables 3Cx 500 mm² - (RD-L-14)-Z4-L014-MV | 2027-02-03 → 2027-08-10 (+188d) | 2027-02-04 → 2027-08-11 (+188d) |  |  |
| 2550 | **RHD4-02-002-L014-(MV)-Medium Voltage cables 3Cx 50 mm²** | 2027-01-07 → 2027-06-17 (+161d) | 2027-02-01 → 2027-07-26 (+175d) |  |  |
| RHD4CZ4L014MV3101 | Installation of Medium Voltage Cables 3Cx 50 mm² - (RD-L-14)-Z4-L014-MV | 2027-01-07 → 2027-06-17 (+161d) | 2027-01-09 → 2027-06-19 (+161d) |  |  |
| RHD4CZ4L014MV3301 | Testing of Medium Voltage Cables 3Cx 50 mm² - (RD-L-14)-Z4-L014-MV | 2027-01-28 → 2027-07-22 (+175d) | 2027-01-30 → 2027-07-24 (+175d) |  |  |
| RHD4CZ4L014MV3401 | Termination of Medium Voltage Cables 3Cx 50 mm² - (RD-L-14)-Z4-L014-MV | 2027-01-31 → 2027-07-25 (+175d) | 2027-02-01 → 2027-07-26 (+175d) |  |  |
| 2551 | **RHD4-02-002-L014-(MV)-Normally open Point (Outdoor Type)** | 2027-01-11 → 2027-07-04 (+174d) | 2027-01-14 → 2027-07-07 (+174d) |  |  |
| RHD4CZ4L014MV4100 | Installation for Normally open Point - (RD-L-14)-Z4-L014-MV | 2027-01-11 → 2027-07-04 (+174d) | 2027-01-12 → 2027-07-05 (+174d) |  |  |
| RHD4CZ4L014MV4200 | Termination for Normally open Point - (RD-L-14)-Z4-L014-MV | 2027-01-13 → 2027-07-06 (+174d) | 2027-01-14 → 2027-07-07 (+174d) |  |  |
| 2552 | **RHD4-02-002-L014-(MV)-Unit Substations** | 2027-01-28 → 2027-07-22 (+175d) | 2027-02-11 → 2027-08-05 (+175d) |  |  |
| RHD4CZ4L014MV5100 | Excavation for Unit Substations for Medium Voltage Network - (RD-L-14)-Z4-L014-MV | 2027-01-28 → 2027-07-22 (+175d) | 2027-01-30 → 2027-07-24 (+175d) |  |  |
| RHD4CZ4L014MV5200 | Concrete Base Placement for Unit Substations for Medium Voltage Network - (RD-L-14)-Z4-L014-MV | 2027-01-31 → 2027-07-25 (+175d) | 2027-02-01 → 2027-07-26 (+175d) |  |  |
| RHD4CZ4L014MV5300 | Installation for Fences and doors for Medium Voltage Network - (RD-L-14)-Z4-L014-MV | 2027-02-02 → 2027-07-27 (+175d) | 2027-02-07 → 2027-08-01 (+175d) |  |  |
| RHD4CZ4L014MV5400 | Installation for Unit Substations for Medium Voltage Network - (RD-L-14)-Z4-L014-MV | 2027-02-08 → 2027-08-02 (+175d) | 2027-02-11 → 2027-08-05 (+175d) |  |  |
| 2553 | **RHD4-02-002-Z4-L014-Low Voltage Network - LV** | 2027-01-11 → 2027-06-21 (+161d) | 2027-03-14 → 2027-09-13 (+183d) |  |  |
| 2554 | **RHD4-02-002-L014-(LV)-Low Voltage duct banks** | 2027-01-11 → 2027-06-21 (+161d) | 2027-01-30 → 2027-07-10 (+161d) |  |  |
| RHD4CZ4L014LV2100 | Excavation of Duct Banks for Low Voltage Network - (RD-L-14)-Z4-L014-LV | 2027-01-11 → 2027-06-21 (+161d) | 2027-01-14 → 2027-06-24 (+161d) |  |  |
| RHD4CZ4L014LV2200 | Installation of Duct Banks for Low Voltage Network - (RD-L-14)-Z4-L014-LV | 2027-01-16 → 2027-06-26 (+161d) | 2027-01-21 → 2027-07-01 (+161d) |  |  |
| RHD4CZ4L014LV2300 | Pouring of Duct Banks for Low Voltage Network - (RD-L-14)-Z4-L014-LV | 2027-01-23 → 2027-07-03 (+161d) | 2027-01-26 → 2027-07-06 (+161d) |  |  |
| RHD4CZ4L014LV2400 | Backfilling of Duct Banks for Low Voltage Network - (RD-L-14)-Z4-L014-LV | 2027-01-27 → 2027-07-07 (+161d) | 2027-01-30 → 2027-07-10 (+161d) |  |  |
| 2555 | **RHD4-02-002-L014-(LV)-Low Voltage Drawpit** | 2027-02-16 → 2027-08-23 (+188d) | 2027-02-20 → 2027-08-26 (+187d) |  |  |
| RHD4CZ4L014LV5100 | Excavation of Drawpit size 900x900x1000mm for Low Voltage Network - (RD-L-14)-Z4-L014-LV | 2027-02-16 → 2027-08-23 (+188d) | 2027-02-17 → 2027-08-24 (+188d) |  |  |
| RHD4CZ4L014LV5200 | Installation of Drawpit size 900x900x1000mm for Low Voltage Network - (RD-L-14)-Z4-L014-LV | 2027-02-18 → 2027-08-25 (+188d) | 2027-02-20 → 2027-08-26 (+187d) |  |  |
| 2556 | **RHD4-02-002-L014-(LV)-Low Voltage cables** | 2027-02-06 → 2027-08-12 (+187d) | 2027-03-14 → 2027-09-13 (+183d) |  |  |
| RHD4CZ4L014LV3100 | Excavation for Low Voltage Cables for Low Voltage Network - (RD-L-14)-Z4-L014-LV | 2027-02-06 → 2027-08-12 (+187d) | 2027-02-15 → 2027-08-22 (+188d) |  | resources Skilled labor [89.19 h]; Unskilled Labor [178.38 h]; Equipment Opreator [178.38 h]; Excavator-Poclain [89.19 h]; Boom Truck [89.19 h]; Cable, Copper 4x185mm2/ CU/XLPE/PVC [30.5 m]; Cable, Copper 4x70mm2/ CU/XLPE/PVC [94.71 m]; Cable, Copper 4x50mm2/ CU/XLPE/PVC +1x25mm2 CU/PVC [70.86 m]; Cable, Copper 3x10mm2/ CU/XLPE/SWA/PVC [213.42 m] → Skilled labor [89.19 h]; Unskilled Labor [178.4 h]; Equipment Opreator [178.4 h]; Excavator-Poclain [89.19 h]; Boom Truck [89.19 h]; Cable, Copper 4x185mm2/ CU/XLPE/PVC [30.5 m]; Cable, Copper 4x70mm2/ CU/XLPE/PVC [94.71 m]; Cable, Copper 4x50mm2/ CU/XLPE/PVC +1x25mm2 CU/PVC [70.86 m]; Cable, Copper 3x10mm2/ CU/XLPE/SWA/PVC [213.42 m] |
| RHD4CZ4L014LV3200 | Cable Laying of Low Voltage Cables for Low Voltage Network - (RD-L-14)-Z4-L014-LV | 2027-02-16 → 2027-08-23 (+188d) | 2027-02-24 → 2027-08-30 (+187d) |  |  |
| RHD4CZ4L014LV3300 | Warning tape and Backfill for Low Voltage Cables for Low Voltage Network - (RD-L-14)-Z4-L014-LV | 2027-02-25 → 2027-08-31 (+187d) | 2027-03-04 → 2027-09-07 (+187d) |  |  |
| RHD4CZ4L014LV3400 | Testing of Low Voltage Cables for Low Voltage Network - (RD-L-14)-Z4-L014-LV | 2027-03-06 → 2027-09-08 (+186d) | 2027-03-14 → 2027-09-13 (+183d) |  | resources Skilled labor [44.54 h]; Unskilled Labor [178.38 h]; Electrician [89.19 h]; Equipment Opreator [44.54 h]; Boom Truck [44.54 h]; Cable, Copper 4x185mm2/ CU/XLPE/PVC [7.62 m]; Cable, Copper 4x70mm2/ CU/XLPE/PVC [23.68 m]; Cable, Copper 4x50mm2/ CU/XLPE/PVC +1x25mm2 CU/PVC [17.71 m]; Cable, Copper 3x10mm2/ CU/XLPE/SWA/PVC [53.36 m] → Skilled labor [44.54 h]; Unskilled Labor [178.4 h]; Electrician [89.19 h]; Equipment Opreator [44.54 h]; Boom Truck [44.54 h]; Cable, Copper 4x185mm2/ CU/XLPE/PVC [7.62 m]; Cable, Copper 4x70mm2/ CU/XLPE/PVC [23.68 m]; Cable, Copper 4x50mm2/ CU/XLPE/PVC +1x25mm2 CU/PVC [17.71 m]; Cable, Copper 3x10mm2/ CU/XLPE/SWA/PVC [53.36 m] |
| 2559 | **RHD4-02-002-Z4-L014-Street Lighting Network - SL** | 2027-01-16 → 2027-06-26 (+161d) | 2027-05-19 → 2027-11-15 (+180d) |  |  |
| 2560 | **RHD4-02-002-L014-(SL)-Street Lighting duct banks** | 2027-01-16 → 2027-06-26 (+161d) | 2027-02-06 → 2027-07-17 (+161d) |  |  |
| RHD4CZ4L014SL2100 | Excavation of Duct Banks for Street Lighting Network - (RD-L-14)-Z4-L014-SL | 2027-01-16 → 2027-06-26 (+161d) | 2027-01-18 → 2027-06-28 (+161d) |  |  |
| RHD4CZ4L014SL2200 | Installation of Duct Banks for Street Lighting Network - (RD-L-14)-Z4-L014-SL | 2027-01-23 → 2027-07-03 (+161d) | 2027-01-26 → 2027-07-06 (+161d) |  |  |
| RHD4CZ4L014SL2300 | Pouring of Duct Banks for Street Lighting Network - (RD-L-14)-Z4-L014-SL | 2027-01-27 → 2027-07-07 (+161d) | 2027-01-30 → 2027-07-10 (+161d) |  |  |
| RHD4CZ4L014SL2400 | Backfilling of Duct Banks for Street Lighting Network - (RD-L-14)-Z4-L014-SL | 2027-01-31 → 2027-07-11 (+161d) | 2027-02-06 → 2027-07-17 (+161d) |  |  |
| 2561 | **RHD4-02-002-L014-(SL)-Street Lighting Drawpit** | 2027-02-18 → 2027-08-25 (+188d) | 2027-02-23 → 2027-08-29 (+187d) |  |  |
| RHD4CZ4L014SL5100 | Excavation of Drawpit size 600x600x900mm for Street Lighting Network - (RD-L-14)-Z4-L014-SL | 2027-02-18 → 2027-08-25 (+188d) | 2027-02-20 → 2027-08-26 (+187d) |  |  |
| RHD4CZ4L014SL5200 | Installation of Drawpit size 600x600x900mm for Street Lighting Network - (RD-L-14)-Z4-L014-SL | 2027-02-21 → 2027-08-28 (+188d) | 2027-02-23 → 2027-08-29 (+187d) |  |  |
| 2562 | **RHD4-02-002-L014-(SL)-Street Lighting cables** | 2027-02-18 → 2027-08-25 (+188d) | 2027-04-21 → 2027-10-23 (+185d) |  |  |
| RHD4CZ4L014SL3100 | Excavation for Street Lighting Cables for Street Lighting Network - (RD-L-14)-Z4-L014-SL | 2027-02-18 → 2027-08-25 (+188d) | 2027-03-13 → 2027-09-12 (+183d) |  |  |
| RHD4CZ4L014SL3200 | Cable Laying of Street Lighting Cables for Street Lighting Network - (RD-L-14)-Z4-L014-SL | 2027-03-14 → 2027-09-13 (+183d) | 2027-03-28 → 2027-09-28 (+184d) |  |  |
| RHD4CZ4L014SL3300 | Warning tape and Backfill for Street Lighting Cables for Street Lighting Network - (RD-L-14)-Z4-L014-SL | 2027-03-29 → 2027-09-29 (+184d) | 2027-04-12 → 2027-10-13 (+184d) |  |  |
| RHD4CZ4L014SL3400 | Testing of Street Lighting Cables for Street Lighting Network - (RD-L-14)-Z4-L014-SL | 2027-04-13 → 2027-10-14 (+184d) | 2027-04-21 → 2027-10-23 (+185d) |  |  |
| 2563 | **RHD4-02-002-L014-(SL)-Street Lighting Poles** | 2027-02-07 → 2027-07-22 (+165d) | 2027-05-19 → 2027-11-15 (+180d) |  |  |
| RHD4CZ4L014SL1100 | Excavation for RC Base for Lighting Poles for Street Lighting Network - (RD-L-14)-Z4-L014-SL | 2027-02-07 → 2027-07-22 (+165d) | 2027-02-15 → 2027-07-31 (+166d) |  |  |
| RHD4CZ4L014SL1200 | Installation for RC Base for Lighting Poles for Street Lighting Network - (RD-L-14)-Z4-L014-SL | 2027-02-16 → 2027-08-01 (+166d) | 2027-02-25 → 2027-08-09 (+165d) |  |  |
| RHD4CZ4L014SL1300 | Backfill for RC Base for Lighting Poles for Street Lighting Network - (RD-L-14)-Z4-L014-SL | 2027-03-07 → 2027-08-26 (+172d) | 2027-03-18 → 2027-09-04 (+170d) |  |  |
| RHD4CZ4L014SL1400 | Installation for Lighting Poles for Street Lighting Network - (RD-L-14)-Z4-L014-SL | 2027-04-22 → 2027-10-24 (+185d) | 2027-05-05 → 2027-11-06 (+185d) |  |  |
| RHD4CZ4L014SL1500 | Luminaire Installation for Lighting Poles for Street Lighting Network - (RD-L-14)-Z4-L014-SL | 2027-05-06 → 2027-11-07 (+185d) | 2027-05-19 → 2027-11-15 (+180d) |  |  |
| 2564 | **RHD4-02-002-L014-(SL)-Street Lighting Feeder Pillars** | 2027-04-13 → 2027-10-14 (+184d) | 2027-05-08 → 2027-11-08 (+184d) |  |  |
| RHD4CZ4L014SL4100 | Leveling for Distribution Pillars for Street Lighting Network - (RD-L-14)-Z4-L014-SL | 2027-04-13 → 2027-10-14 (+184d) | 2027-04-14 → 2027-10-16 (+185d) |  |  |
| RHD4CZ4L014SL4200 | Lean Concrete for Distribution Pillars for Street Lighting Network - (RD-L-14)-Z4-L014-SL | 2027-04-15 → 2027-10-17 (+185d) | 2027-04-17 → 2027-10-18 (+184d) |  |  |
| RHD4CZ4L014SL4300 | Installation of Distribution Pillars for Street Lighting Network - (RD-L-14)-Z4-L014-SL | 2027-05-06 → 2027-11-07 (+185d) | 2027-05-08 → 2027-11-08 (+184d) |  |  |
| 2565 | **RHD4-02-002-L014-(SL)-Street Lighting Earthing System** | 2027-05-09 → 2027-11-09 (+184d) | 2027-05-10 → 2027-11-10 (+184d) |  |  |
| RHD4CZ4L014SL6100 | Installation of Earthing for Lighting Poles and Fedder Pillers for Street Lighting Network - (RD-L-14)-Z4-L014-SL | 2027-05-09 → 2027-11-09 (+184d) | 2027-05-10 → 2027-11-10 (+184d) |  |  |
| 2571 | **RHD4-02-002-Z4-L014-Telecommunications Network - TC** | 2026-08-12 → 2027-02-11 (+183d) | 2027-06-09 → 2027-12-06 (+180d) |  |  |
| 2572 | **RHD4-02-002-L014-(TC)-Telecommunications Ducts** | 2027-04-13 → 2027-10-14 (+184d) | 2027-06-09 → 2027-12-06 (+180d) |  |  |
| RHD4CZ4L014TC2100 | Excavation of HDPE Ducts for Telecom Network - (RD-L-14)-Z4-L014-TC | 2027-04-13 → 2027-10-14 (+184d) | 2027-04-26 → 2027-10-27 (+184d) |  |  |
| RHD4CZ4L014TC2200 | Installation of HDPE Ducts for Telecom Network - (RD-L-14)-Z4-L014-TC | 2027-04-27 → 2027-10-28 (+184d) | 2027-05-10 → 2027-11-10 (+184d) |  |  |
| RHD4CZ4L014TC2400 | Backfilling of HDPE Ducts for Telecom Network - (RD-L-14)-Z4-L014-TC | 2027-05-27 → 2027-11-23 (+180d) | 2027-06-09 → 2027-12-06 (+180d) |  |  |
| 2573 | **RHD4-02-002-L014-(TC)-Telecommunications Manholes** | 2027-04-27 → 2027-10-28 (+184d) | 2027-05-26 → 2027-11-22 (+180d) |  |  |
| RHD4CZ4L014TC5100 | Excavation for Manholes for Telecom Network - (RD-L-14)-Z4-L014-TC | 2027-04-27 → 2027-10-28 (+184d) | 2027-05-09 → 2027-11-09 (+184d) |  |  |
| RHD4CZ4L014TC5200 | Installation of Manholes for Telecom Network - (RD-L-14)-Z4-L014-TC | 2027-05-10 → 2027-11-10 (+184d) | 2027-05-26 → 2027-11-22 (+180d) |  |  |
| 2574 | **RHD4-02-002-L014-(TC)-Telecomminications Road Crossings** | 2026-08-12 → 2027-02-11 (+183d) | 2026-08-20 → 2027-03-03 (+195d) |  |  |
| RHD4CZ4L014TC3100 | Excavation for Road Crossings for Telecom Network - (RD-L-14)-Z4-L014-TC | 2026-08-12 → 2027-02-11 (+183d) | 2026-08-13 → 2027-02-13 (+184d) |  |  |
| RHD4CZ4L014TC3200 | Installation of Road Crossings for Telecom Network - (RD-L-14)-Z4-L014-TC | 2026-08-15 → 2027-02-14 (+183d) | 2026-08-16 → 2027-02-15 (+183d) |  |  |
| RHD4CZ4L014TC3300 | Pouring of Road Crossings for Telecom Network - (RD-L-14)-Z4-L014-TC | 2026-08-17 → 2027-02-16 (+183d) | 2026-08-18 → 2027-02-23 (+189d) | 2d → 6d |  |
| RHD4CZ4L014TC3400 | Backfilling of Road Crossings for Telecom Network - (RD-L-14)-Z4-L014-TC | 2026-08-19 → 2027-02-24 (+189d) | 2026-08-20 → 2027-03-03 (+195d) | 2d → 7d |  |
| 2575 | **RHD4-02-002-Z4-L014-Information and Communication Technologies - ICT** | 2026-08-12 → 2027-02-11 (+183d) | 2027-06-12 → 2027-12-08 (+179d) |  |  |

| ID | Task | Start | Finish | Duration | Complete | Other |
| --- | --- | --- | --- | --- | --- | --- |
| 2576 | **RHD4-02-002-L014-(ICT)-Information and Communication Technologies Ducts** | 2027-04-13 → 2027-10-14 (+184d) | 2027-06-12 → 2027-12-08 (+179d) |  |  |  |
| RHD4CZ4L014ICT2100 | Excavation of HDPE Ducts for ICT Network - (RD-L-14)-Z4-L014-ICT | 2027-04-13 → 2027-10-14 (+184d) | 2027-04-26 → 2027-10-27 (+184d) |  |  |  |
| RHD4CZ4L014ICT2200 | Installation of HDPE Ducts for ICT Network - (RD-L-14)-Z4-L014-ICT | 2027-04-27 → 2027-10-28 (+184d) | 2027-05-10 → 2027-11-10 (+184d) |  |  |  |
| RHD4CZ4L014ICT2400 | Backfilling of HDPE Ducts for ICT Network - (RD-L-14)-Z4-L014-ICT | 2027-05-30 → 2027-11-25 (+179d) | 2027-06-12 → 2027-12-08 (+179d) |  |  |  |
| 2577 | **RHD4-02-002-L014-(ICT)-Information and Communication Technologies Manholes** | 2027-04-27 → 2027-10-28 (+184d) | 2027-05-29 → 2027-11-24 (+179d) |  |  |  |
| RHD4CZ4L014ICT5100 | Excavation for Manholes for ICT Network - (RD-L-14)-Z4-L014-ICT | 2027-04-27 → 2027-10-28 (+184d) | 2027-05-10 → 2027-11-10 (+184d) |  |  |  |
| RHD4CZ4L014ICT5200 | Installation of Manholes for ICT Network - (RD-L-14)-Z4-L014-ICT | 2027-05-11 → 2027-11-11 (+184d) | 2027-05-29 → 2027-11-24 (+179d) |  |  |  |
| 2578 | **RHD4-02-002-L014-(ICT)-Information and Communication Technologies Road Crossings** | 2026-08-12 → 2027-02-11 (+183d) | 2026-08-23 → 2027-03-17 (+206d) |  |  |  |
| RHD4CZ4L014ICT3100 | Excavation for Road Crossings for ICT Network - (RD-L-14)-Z4-L014-ICT | 2026-08-12 → 2027-02-11 (+183d) | 2026-08-13 → 2027-02-18 (+189d) | 2d → 7d |  |  |
| RHD4CZ4L014ICT3200 | Installation of Road Crossings for ICT Network - (RD-L-14)-Z4-L014-ICT | 2026-08-17 → 2027-02-20 (+187d) | 2026-08-18 → 2027-02-28 (+194d) | 2d → 7d |  | resources Carpenter [7.19 h]; Skilled labor [72.2 h]; Unskilled Labor [72.2 h]; Steel Fixer [7.19 h]; Road crossing ducts, (2*50mm) HDPE -ICT [9.95 m] → Carpenter [7.2 h]; Skilled labor [72.2 h]; Unskilled Labor [72.2 h]; Steel Fixer [7.2 h]; Road crossing ducts, (2*50mm) HDPE -ICT [9.95 m] |
| RHD4CZ4L014ICT3300 | Pouring of Road Crossings for ICT Network - (RD-L-14)-Z4-L014-ICT | 2026-08-19 → 2027-03-01 (+194d) | 2026-08-20 → 2027-03-08 (+200d) | 2d → 7d |  |  |
| RHD4CZ4L014ICT3400 | Backfilling of Road Crossings for ICT Network - (RD-L-14)-Z4-L014-ICT | 2026-08-22 → 2027-03-13 (+203d) | 2026-08-23 → 2027-03-17 (+206d) | 2d → 5d |  |  |
| 2579 | **RHD4-02-002-Z4-L014-Security Network - CCTV** | 2027-06-13 → 2027-12-09 (+179d) | 2027-07-26 → 2028-01-22 (+180d) |  |  |  |
| 2580 | **RHD4-02-002-L014-(CCTV)-Civil Works** | 2027-06-13 → 2027-12-09 (+179d) | 2027-06-23 → 2027-12-20 (+180d) |  |  |  |
| RHD4CZ4L014CCTV2100 | Civil Works for Security Network - (RD-L-14)-Z4-L014-CCTV | 2027-06-13 → 2027-12-09 (+179d) | 2027-06-23 → 2027-12-20 (+180d) |  |  |  |
| 2581 | **RHD4-02-002-L014-(CCTV)-CCTV Poles** | 2027-06-24 → 2027-12-21 (+180d) | 2027-07-05 → 2028-01-01 (+180d) |  |  |  |
| RHD4CZ4L014CCTV1100 | Excavation for RC Base for CCTV Poles for Security Network - (RD-L-14)-Z4-L014-CCTV | 2027-06-24 → 2027-12-21 (+180d) | 2027-06-26 → 2027-12-22 (+179d) |  |  |  |
| RHD4CZ4L014CCTV1200 | Installation for RC Base for CCTV Poles for Security Network - (RD-L-14)-Z4-L014-CCTV | 2027-06-27 → 2027-12-23 (+179d) | 2027-06-28 → 2027-12-25 (+180d) |  |  |  |
| RHD4CZ4L014CCTV1300 | Backfill for RC Base for CCTV Poles for Security Network - (RD-L-14)-Z4-L014-CCTV | 2027-06-29 → 2027-12-26 (+180d) | 2027-06-30 → 2027-12-27 (+180d) |  |  |  |
| RHD4CZ4L014CCTV1400 | Installation for CCTV Poles for Security Network - (RD-L-14)-Z4-L014-CCTV | 2027-07-01 → 2027-12-28 (+180d) | 2027-07-03 → 2027-12-29 (+179d) |  |  |  |
| RHD4CZ4L014CCTV1500 | Protection post Installation for CCTV Poles for Security Network - (RD-L-14)-Z4-L014-CCTV | 2027-07-04 → 2027-12-30 (+179d) | 2027-07-05 → 2028-01-01 (+180d) |  |  |  |
| 2582 | **RHD4-02-002-L014-(CCTV)-Camera** | 2027-07-06 → 2028-01-02 (+180d) | 2027-07-07 → 2028-01-03 (+180d) |  |  |  |
| RHD4CZ4L014CCTV3100 | Installation for Cameras for Security Network - (RD-L-14)-Z4-L014-CCTV | 2027-07-06 → 2028-01-02 (+180d) | 2027-07-07 → 2028-01-03 (+180d) |  |  |  |
| 2583 | **RHD4-02-002-L014-(CCTV)-Power and Infrastructure** | 2027-07-04 → 2027-12-30 (+179d) | 2027-07-07 → 2028-01-03 (+180d) |  |  |  |
| RHD4CZ4L014CCTV4100 | Installation of Power outlet, UPS and midspan for PTZ Camerafor Cameras for Security Network - (RD-L-14)-Z4-L014-CCTV | 2027-07-04 → 2027-12-30 (+179d) | 2027-07-05 → 2028-01-01 (+180d) |  |  |  |
| RHD4CZ4L014CCTV4200 | Short Range Wireless PoP wireless Bridgefor CCTV Poles for Security Network - (RD-L-12/2)-Z3-L122-CCTV | 2027-07-06 → 2028-01-02 (+180d) | 2027-07-07 → 2028-01-03 (+180d) |  |  | resources Skilled labor [10.88 h]; Unskilled Labor [21.76 h]; Electrician [10.88 h]; Equipment Opreator [21.76 h]; Excavator-Poclain [5.45 h]; Dump Truck [5.45 h]; Short Range wireless point to point wireless bridge [2 nr] → Skilled labor [10.88 h]; Unskilled Labor [21.76 h]; Electrician [10.88 h]; Equipment Opreator [21.76 h]; Excavator-Poclain [5.44 h]; Dump Truck [5.44 h]; Short Range wireless point to point wireless bridge [2 nr] |
| 2585 | **RHD4-02-002-L014-(CCTV)-CCTV Panels and Components** | 2027-07-08 → 2028-01-04 (+180d) | 2027-07-26 → 2028-01-22 (+180d) |  |  |  |
| RHD4CZ4L014CCTV6100 | Installation for CCTV Panels for Security Network - (RD-L-14)-Z4-L014-CCTV | 2027-07-08 → 2028-01-04 (+180d) | 2027-07-26 → 2028-01-22 (+180d) |  |  |  |
| 2596 | **RHD4-02-002-Z4-L09** | 2026-08-16 → 2026-08-10 (-6d) | 2027-06-02 → 2027-12-19 (+200d) |  |  |  |
| 2775 | **RHD4-02-002-Z4-L09-Road Works - RD** | 2026-08-27 → 2027-02-28 (+185d) | 2027-06-02 → 2027-12-19 (+200d) |  |  |  |
| 2776 | **RHD4-02-002-L09-(RD)-Subgrade** | 2026-08-27 → 2027-02-28 (+185d) | 2026-09-01 → 2027-03-15 (+195d) |  |  |  |
| RHD4CZ4L09RD1100 | Supply, lay and compaction subgrade compacted thickness 300 mm for Roads - (RD-L-9)-Z4-L09-RD | 2026-08-27 → 2027-02-28 (+185d) | 2026-09-01 → 2027-03-15 (+195d) | 5d → 11d |  |  |
| 2777 | **RHD4-02-002-L09-(RD)-Aggregate Base Course** | 2026-09-02 → 2027-03-16 (+195d) | 2026-09-07 → 2027-03-28 (+202d) |  |  |  |
| RHD4CZ4L09RD2100 | Supply, lay and compaction Aggregate base course compacted thickness 300 mmfor Roads - (RD-L-9)-Z4-L09-RD | 2026-09-02 → 2027-03-16 (+195d) | 2026-09-07 → 2027-03-28 (+202d) | 5d → 11d |  |  |
| 2778 | **RHD4-02-002-L09-(RD)-Bituminous base course Two Layers, including (MC1)&(RC2)** | 2026-09-19 → 2027-04-11 (+204d) | 2027-04-15 → 2027-10-31 (+199d) |  |  |  |
| RHD4CZ4L09RD3100 | Supply, lay and Asphaltic base course including Prime Coat (MC1) for 1st Layer - (RD-L-9)-Z4-L09-RD | 2026-09-19 → 2027-04-11 (+204d) | 2026-09-20 → 2027-04-12 (+204d) |  |  | resources Skilled labor [19.17 h]; Unskilled Labor [114.68 h]; Equipment Opreator [286.85 h]; Bobcat [19.17 h]; Roller compactor [19.17 h]; Asphalt Paver [19.17 h]; Rubber Compactor [38.23 h]; MC1/RC2 Sprinkler [19.17 h]; Dump Truck [172.07 h]; Bituminous base course (Grading I - Class A), including Prime coat (MC1) & tack coate (RC2) [699.56 m3] → Skilled labor [19.2 h]; Unskilled Labor [114.68 h]; Equipment Opreator [286.85 h]; Bobcat [19.2 h]; Roller compactor [19.2 h]; Asphalt Paver [19.2 h]; Rubber Compactor [38.23 h]; MC1/RC2 Sprinkler [19.2 h]; Dump Truck [172.07 h]; Bituminous base course (Grading I - Class A), including Prime coat (MC1) & tack coate (RC2) [699.56 m3] |
| RHD4CZ4L09RD3200 | Supply, lay and Asphaltic base course including Tack Coat (RC2) for 2nd Layer - (RD-L-9)-Z4-L09-RD | 2027-04-14 → 2027-10-30 (+199d) | 2027-04-15 → 2027-10-31 (+199d) |  |  | resources Skilled labor [19.17 h]; Unskilled Labor [114.68 h]; Equipment Opreator [286.85 h]; Bobcat [19.17 h]; Roller compactor [19.17 h]; Asphalt Paver [19.17 h]; Rubber Compactor [38.23 h]; MC1/RC2 Sprinkler [19.17 h]; Dump Truck [172.07 h]; Bituminous base course (Grading I - Class A), including Prime coat (MC1) & tack coate (RC2) [699.56 m3] → Skilled labor [19.2 h]; Unskilled Labor [114.68 h]; Equipment Opreator [286.85 h]; Bobcat [19.2 h]; Roller compactor [19.2 h]; Asphalt Paver [19.2 h]; Rubber Compactor [38.23 h]; MC1/RC2 Sprinkler [19.2 h]; Dump Truck [172.07 h]; Bituminous base course (Grading I - Class A), including Prime coat (MC1) & tack coate (RC2) [699.56 m3] |
| 2780 | **RHD4-02-002-L09-(RD)-Precast Concrete Curb** | 2027-04-17 → 2027-11-01 (+198d) | 2027-04-28 → 2027-11-13 (+199d) |  |  |  |
| RHD4CZ4L09RD5100 | Supply and installation Precast Concrete Kerb for Roads - (RD-L-9)-Z4-L09-RD | 2027-04-17 → 2027-11-01 (+198d) | 2027-04-28 → 2027-11-13 (+199d) |  |  |  |
| 2783 | **RHD4-02-002-L09-(RD)-Traffic Signage** | 2027-04-29 → 2027-11-14 (+199d) | 2027-05-02 → 2027-11-22 (+204d) |  |  |  |
| RHD4CZ4L09RD8100 | Installation of Traffic Signage for Road Network - (RD-L-9)-Z4-L09-RD | 2027-04-29 → 2027-11-14 (+199d) | 2027-05-02 → 2027-11-22 (+204d) | 3d → 8d |  | resources Skilled labor [174.25 h]; Unskilled Labor [87.12 h]; Electrician [42.47 h]; Equipment Opreator [34.41 h]; Boom Truck [17.42 h]; Concrete Mixer Truck [16.99 h]; Traffic signs, ground mounted, 1 Sheet Aluminium, (breakaway)Single post [37 nr] → Skilled labor [174.25 h]; Unskilled Labor [87.12 h]; Electrician [42.47 h]; Equipment Opreator [34.4 h]; Boom Truck [17.42 h]; Concrete Mixer Truck [16.99 h]; Traffic signs, ground mounted, 1 Sheet Aluminium, (breakaway)Single post [37 nr] |
| 2781 | **RHD4-02-002-L09-(RD)-Precast Interlocking Block Pavers** | 2027-05-03 → 2027-11-23 (+204d) | 2027-05-26 → 2027-12-12 (+200d) |  |  |  |
| RHD4CZ4L09RD6100 | Interlocking block pavers for sidewalk-footpath for Side walks and Parking areas - (RD-L-9)-Z4-L09-RD | 2027-05-03 → 2027-11-23 (+204d) | 2027-05-26 → 2027-12-12 (+200d) |  |  |  |
| 2779 | **RHD4-02-002-L09-(RD)-Bituminous concrete wearing course including tack coat (RC2)** | 2027-05-27 → 2027-12-13 (+200d) | 2027-05-29 → 2027-12-14 (+199d) |  |  |  |
| RHD4CZ4L09RD4100 | Supply, lay and compaction Asphaltic wearing course including tack Coat (RC2)for Road Network - (RD-L-9)-Z4-L09-RD | 2027-05-27 → 2027-12-13 (+200d) | 2027-05-29 → 2027-12-14 (+199d) |  |  |  |
| 2782 | **RHD4-02-002-L09-(RD)-Pavement Marking** | 2027-05-30 → 2027-12-15 (+199d) | 2027-06-02 → 2027-12-19 (+200d) |  |  |  |
| RHD4CZ4L09RD7100 | Pavement Markings for Road Network - (RD-L-9)-Z4-L09-RD | 2027-05-30 → 2027-12-15 (+199d) | 2027-06-02 → 2027-12-19 (+200d) |  |  |  |
| 2600 | **RHD4-02-002-Z4-L09-Storm Network - ST** | 2026-08-16 → 2026-08-10 (-6d) | 2026-12-06 → 2027-05-22 (+167d) |  |  |  |
| 8104 | **RHD4-02-002-L09-(ST)-MH Works - 2000 mm diameter** | 2026-08-16 → 2026-09-19 (+34d) | 2026-08-26 → 2027-02-27 (+185d) |  |  |  |
| RHD4CZ4L09ST3102 | Excavation and PC Blinding works for MH 2000 mm - (RD-L-9)-Z4-L09-ST | 2026-08-16 → 2026-09-19 A (+34d) | 2026-08-17 → 2027-02-16 (+183d) |  | 0% → 56% | resources Skilled labor [7.3 h]; Unskilled Labor [7.3 h]; Equipment Opreator [11.65 h]; Excavator-Poclain [7.3 h]; Water Truck [0.76 h]; Dump Truck [3.59 h]; MH (2000mm Diameter) - ST - depth 1.50 - 2.5m [0.25 nr]; MH (2000mm Diameter) - ST - depth 2.51 - 3.5m [0.25 nr] → Skilled labor [7.3 h]; Unskilled Labor [7.3 h]; Equipment Opreator [11.65 h]; Excavator-Poclain [7.3 h]; Water Truck [0.8 h]; Dump Truck [3.59 h]; MH (2000mm Diameter) - ST - depth 1.50 - 2.5m [0.25 nr]; MH (2000mm Diameter) - ST - depth 2.51 - 3.5m [0.25 nr] |
| RHD4CZ4L09ST3202 | Installation of Base for MH 2000 mm - (RD-L-9)-Z4-L09-ST | 2026-08-18 → 2027-02-17 (+183d) | 2026-08-19 → 2027-02-18 (+183d) |  |  |  |
| RHD4CZ4L09ST3302 | MH Ring and C.Slab works and Backfilling works for MH 2000 mm - (RD-L-9)-Z4-L09-ST | 2026-08-20 → 2027-02-20 (+184d) | 2026-08-22 → 2027-02-21 (+183d) |  |  |  |
| RHD4CZ4L09ST3402 | Steel Cover for MH 2000 mm - (RD-L-9)-Z4-L09-ST | 2026-08-23 → 2027-02-23 (+184d) | 2026-08-24 → 2027-02-24 (+184d) |  |  |  |
| RHD4CZ4L09ST3502 | Finishing, Benching, Testing works for MH 2000 mm - (RD-L-9)-Z4-L09-ST | 2026-08-25 → 2027-02-25 (+184d) | 2026-08-26 → 2027-02-27 (+185d) |  |  |  |
| 8092 | **RHD4-02-002-L09-(ST)-GRP Pipes - 1000 mm diameter** | 2026-10-11 → 2026-08-10 (-62d) | 2026-10-21 → 2027-03-27 (+157d) |  |  |  |
| RHD4CZ4L09ST1106 | Excavation works for GRP Pipe Line 1000 mm - (RD-L-9)-Z4-L09-ST | 2026-10-11 → 2026-08-10 A (-62d) | 2026-10-12 → 2026-10-20 A (+8d) |  | 0% → 100% |  |
| RHD4CZ4L09ST1206 | Bedding works for GRP Pipe Line 1000 mm - (RD-L-9)-Z4-L09-ST | 2026-10-13 → 2026-09-19 A (-24d) | 2026-10-14 → 2027-03-20 (+157d) |  | 0% → 50% |  |
| RHD4CZ4L09ST1306 | Installing for GRP Pipe Line 1000 mm - (RD-L-9)-Z4-L09-ST | 2026-10-15 → 2026-09-21 A (-24d) | 2026-10-17 → 2027-03-22 (+156d) |  | 0% → 50% |  |
| RHD4CZ4L09ST1406 | Primary Test for GRP Pipe Line 1000 mm - (RD-L-9)-Z4-L09-ST | 2026-10-18 → 2027-03-23 (+156d) | 2026-10-19 → 2027-03-24 (+156d) |  |  |  |
| RHD4CZ4L09ST1506 | Backfilling and warning tape works for GRP Pipe Line 1000 mm - (RD-L-9)-Z4-L09-ST | 2026-10-20 → 2027-03-25 (+156d) | 2026-10-21 → 2027-03-27 (+157d) |  |  |  |
| 2413 | **RHD4-02-002-L09-(ST)-GRP Pipes - 500 mm diameter** | 2026-10-13 → 2027-03-18 (+156d) | 2026-10-24 → 2027-03-29 (+156d) |  |  |  |
| RHD4CZ4L09ST1101 | Excavation works for GRP Pipe Line 500 mm - (RD-L-9)-Z4-L09-ST | 2026-10-13 → 2027-03-18 (+156d) | 2026-10-14 → 2027-03-20 (+157d) |  |  | resources Skilled labor [4.79 h]; Unskilled Labor [4.79 h]; Equipment Opreator [5.77 h]; Excavator-Poclain [4.79 h]; Dump Truck [0.98 h]; GRP (500mm Diameter) - ST - Depth less than 1.5 m [8.84 m]; GRP (500mm Diameter) - ST - Depth: 1.51m - 2.5m → Skilled labor [4.8 h]; Unskilled Labor [4.8 h]; Equipment Opreator [5.77 h]; Excavator-Poclain [4.8 h]; Dump Truck [0.98 h]; GRP (500mm Diameter) - ST - Depth less than 1.5 m [8.84 m]; GRP (500mm Diameter) - ST - Depth: 1.51m - 2.5m |
| RHD4CZ4L09ST1201 | Bedding works for GRP Pipe Line 500 mm - (RD-L-9)-Z4-L09-ST | 2026-10-15 → 2027-03-21 (+157d) | 2026-10-17 → 2027-03-22 (+156d) |  |  | resources Skilled labor [4.79 h]; Unskilled Labor [9.58 h]; Equipment Opreator [9.58 h]; Excavator-Poclain [4.79 h]; Dump Truck [4.79 h]; GRP (500mm Diameter) - ST - Depth less than 1.5 m [4.42 m]; GRP (500mm Diameter) - ST - Depth: 1.51m - 2.5m → Skilled labor [4.8 h]; Unskilled Labor [9.6 h]; Equipment Opreator [9.6 h]; Excavator-Poclain [4.8 h]; Dump Truck [4.8 h]; GRP (500mm Diameter) - ST - Depth less than 1.5 m [4.42 m]; GRP (500mm Diameter) - ST - Depth: 1.51m - 2.5m |
| RHD4CZ4L09ST1301 | Installing for GRP Pipe Line 500 mm - (RD-L-9)-Z4-L09-ST | 2026-10-18 → 2027-03-23 (+156d) | 2026-10-19 → 2027-03-24 (+156d) |  |  | resources Unskilled Labor [9.58 h]; Plumber [4.79 h]; GRP (500mm Diameter) - ST - Depth less than 1.5 m [39.8 m]; GRP (500mm Diameter) - ST - Depth: 1.51m - 2.5m → Unskilled Labor [9.6 h]; Plumber [4.8 h]; GRP (500mm Diameter) - ST - Depth less than 1.5 m [39.8 m]; GRP (500mm Diameter) - ST - Depth: 1.51m - 2.5m |
| RHD4CZ4L09ST1401 | Primary Test for GRP Pipe Line 500 mm - (RD-L-9)-Z4-L09-ST | 2026-10-20 → 2027-03-25 (+156d) | 2026-10-21 → 2027-03-27 (+157d) |  |  | resources Unskilled Labor [4.79 h]; Plumber [4.79 h]; Equipment Opreator [4.79 h]; Water Truck [4.79 h]; GRP (500mm Diameter) - ST - Depth less than 1.5 m [17.69 m]; GRP (500mm Diameter) - ST - Depth: 1.51m - 2.5m → Unskilled Labor [4.8 h]; Plumber [4.8 h]; Equipment Opreator [4.8 h]; Water Truck [4.8 h]; GRP (500mm Diameter) - ST - Depth less than 1.5 m [17.69 m]; GRP (500mm Diameter) - ST - Depth: 1.51m - 2.5m |
| RHD4CZ4L09ST1501 | Backfilling and warning tape works for GRP Pipe Line 500 mm - (RD-L-9)-Z4-L09-ST | 2026-10-22 → 2027-03-28 (+157d) | 2026-10-24 → 2027-03-29 (+156d) |  |  | resources Skilled labor [4.79 h]; Unskilled Labor [9.58 h]; Equipment Opreator [9.58 h]; Excavator-Poclain [4.79 h]; Dump Truck [4.79 h]; GRP (500mm Diameter) - ST - Depth less than 1.5 m [17.69 m]; GRP (500mm Diameter) - ST - Depth: 1.51m - 2.5m → Skilled labor [4.8 h]; Unskilled Labor [9.6 h]; Equipment Opreator [9.6 h]; Excavator-Poclain [4.8 h]; Dump Truck [4.8 h]; GRP (500mm Diameter) - ST - Depth less than 1.5 m [17.69 m]; GRP (500mm Diameter) - ST - Depth: 1.51m - 2.5m |
| 2617 | **RHD4-02-002-L09-(ST)-MH Works - 1200 mm diameter** | 2026-10-25 → 2027-03-30 (+156d) | 2026-11-04 → 2027-04-10 (+157d) |  |  |  |
| RHD4CZ4L09ST3100 | Excavation and PC Blinding works for MH 1200 mm - (RD-L-9)-Z4-L09-ST | 2026-10-25 → 2027-03-30 (+156d) | 2026-10-26 → 2027-03-31 (+156d) |  |  |  |
| RHD4CZ4L09ST3200 | Installation of Base for MH 1200 mm - (RD-L-9)-Z4-L09-ST | 2026-10-27 → 2027-04-01 (+156d) | 2026-10-28 → 2027-04-03 (+157d) |  |  |  |
| RHD4CZ4L09ST3300 | MH Ring and C.Slab works and Backfilling works for MH 1200 mm - (RD-L-9)-Z4-L09-ST | 2026-10-29 → 2027-04-04 (+157d) | 2026-10-31 → 2027-04-05 (+156d) |  |  |  |

| ID | Task | Start | Finish | Duration | Complete | Other |
| --- | --- | --- | --- | --- | --- | --- |
| RHD4CZ4L09ST3400 | Steel Cover for MH 1200 mm - (RD-L-9)-Z4-L09-ST | 2026-11-01 → 2027-04-06 (+156d) | 2026-11-02 → 2027-04-07 (+156d) |  |  |  |
| RHD4CZ4L09ST3500 | Finishing, Benching, Testing works for MH 1200 mm - (RD-L-9)-Z4-L09-ST | 2026-11-03 → 2027-04-08 (+156d) | 2026-11-04 → 2027-04-10 (+157d) |  |  |  |
| 2618 | **RHD4-02-002-L09-(ST)-MH Works - 1500 mm diameter** | 2026-10-25 → 2026-10-27 (+2d) | 2026-12-06 → 2027-05-22 (+167d) |  |  |  |
| RHD4CZ4L09ST3101 | Excavation and PC Blinding works for MH 1500 mm - (RD-L-9)-Z4-L09-ST | 2026-10-25 → 2026-10-27 A (+2d) | 2026-11-03 → 2027-04-08 (+156d) |  | 0% → 42% |  |
| RHD4CZ4L09ST3201 | Installation of Base for MH 1500 mm - (RD-L-9)-Z4-L09-ST | 2026-11-04 → 2026-10-29 A (-6d) | 2026-11-14 → 2027-04-19 (+156d) |  | 0% → 42% |  |
| RHD4CZ4L09ST3301 | MH Ring and C.Slab works and Backfilling works for MH 1500 mm - (RD-L-9)-Z4-L09-ST | 2026-11-15 → 2027-04-20 (+156d) | 2026-11-24 → 2027-04-29 (+156d) |  |  |  |
| RHD4CZ4L09ST3401 | Steel Cover for MH 1500 mm - (RD-L-9)-Z4-L09-ST | 2026-11-25 → 2027-05-01 (+157d) | 2026-12-01 → 2027-05-06 (+156d) |  |  |  |
| RHD4CZ4L09ST3501 | Finishing, Benching, Testing works for MH 1500 mm - (RD-L-9)-Z4-L09-ST | 2026-12-02 → 2027-05-08 (+157d) | 2026-12-06 → 2027-05-22 (+167d) | 4d → 9d |  |  |
| 2606 | **RHD4-02-002-L09-(ST)-GRP Pipes - 900 mm diameter** | 2026-10-29 → 2027-04-04 (+157d) | 2026-11-09 → 2027-04-14 (+156d) |  |  |  |
| RHD4CZ4L09ST1105 | Excavation works for GRP Pipe Line 900 mm - (RD-L-9)-Z4-L09-ST | 2026-10-29 → 2027-04-04 (+157d) | 2026-10-31 → 2027-04-05 (+156d) |  |  |  |
| RHD4CZ4L09ST1205 | Bedding works for GRP Pipe Line 900 mm - (RD-L-9)-Z4-L09-ST | 2026-11-01 → 2027-04-06 (+156d) | 2026-11-02 → 2027-04-07 (+156d) |  |  |  |
| RHD4CZ4L09ST1305 | Installing for GRP Pipe Line 900 mm - (RD-L-9)-Z4-L09-ST | 2026-11-03 → 2027-04-08 (+156d) | 2026-11-04 → 2027-04-10 (+157d) |  |  |  |
| RHD4CZ4L09ST1405 | Primary Test for GRP Pipe Line 900 mm - (RD-L-9)-Z4-L09-ST | 2026-11-05 → 2027-04-11 (+157d) | 2026-11-07 → 2027-04-12 (+156d) |  |  |  |
| RHD4CZ4L09ST1505 | Backfilling and warning tape works for GRP Pipe Line 900 mm - (RD-L-9)-Z4-L09-ST | 2026-11-08 → 2027-04-13 (+156d) | 2026-11-09 → 2027-04-14 (+156d) |  |  |  |
| 2605 | **RHD4-02-002-L09-(ST)-GRP Pipes - 800 mm diameter** | 2026-11-01 → 2026-09-30 (-32d) | 2026-11-11 → 2027-04-17 (+157d) |  |  |  |
| RHD4CZ4L09ST1104 | Excavation works for GRP Pipe Line 800 mm - (RD-L-9)-Z4-L09-ST | 2026-11-01 → 2026-09-30 A (-32d) | 2026-11-02 → 2027-04-07 (+156d) |  | 0% → 13% |  |
| RHD4CZ4L09ST1204 | Bedding works for GRP Pipe Line 800 mm - (RD-L-9)-Z4-L09-ST | 2026-11-03 → 2027-04-08 (+156d) | 2026-11-04 → 2027-04-10 (+157d) |  |  |  |
| RHD4CZ4L09ST1304 | Installing for GRP Pipe Line 800 mm - (RD-L-9)-Z4-L09-ST | 2026-11-05 → 2027-04-11 (+157d) | 2026-11-07 → 2027-04-12 (+156d) |  |  |  |
| RHD4CZ4L09ST1404 | Primary Test for GRP Pipe Line 800 mm - (RD-L-9)-Z4-L09-ST | 2026-11-08 → 2027-04-13 (+156d) | 2026-11-09 → 2027-04-14 (+156d) |  |  |  |
| RHD4CZ4L09ST1504 | Backfilling and warning tape works for GRP Pipe Line 800 mm - (RD-L-9)-Z4-L09-ST | 2026-11-10 → 2027-04-15 (+156d) | 2026-11-11 → 2027-04-17 (+157d) |  |  |  |
| 2604 | **RHD4-02-002-L09-(ST)-GRP Pipes - 700 mm diameter** | 2026-10-29 → 2027-04-04 (+157d) | 2026-11-14 → 2027-04-19 (+156d) |  |  |  |
| RHD4CZ4L09ST1103 | Excavation works for GRP Pipe Line 700 mm - (RD-L-9)-Z4-L09-ST | 2026-10-29 → 2027-04-04 (+157d) | 2026-10-31 → 2027-04-05 (+156d) |  |  | resources Skilled labor [9.37 h]; Unskilled Labor [9.37 h]; Equipment Opreator [11.22 h]; Excavator-Poclain [9.37 h]; Dump Truck [1.85 h]; GRP (700mm Diameter) - ST - Depth less than 1.5 m [9.23 m]; GRP (700mm Diameter) - ST - Depth: 1.51m - 2.5m [14.78 m] → Skilled labor [9.37 h]; Unskilled Labor [9.37 h]; Equipment Opreator [11.2 h]; Excavator-Poclain [9.37 h]; Dump Truck [1.85 h]; GRP (700mm Diameter) - ST - Depth less than 1.5 m [9.23 m]; GRP (700mm Diameter) - ST - Depth: 1.51m - 2.5m [14.78 m] |
| RHD4CZ4L09ST1203 | Bedding works for GRP Pipe Line 700 mm - (RD-L-9)-Z4-L09-ST | 2026-11-05 → 2027-04-11 (+157d) | 2026-11-07 → 2027-04-12 (+156d) |  |  |  |
| RHD4CZ4L09ST1303 | Installing for GRP Pipe Line 700 mm - (RD-L-9)-Z4-L09-ST | 2026-11-08 → 2027-04-13 (+156d) | 2026-11-09 → 2027-04-14 (+156d) |  |  |  |
| RHD4CZ4L09ST1403 | Primary Test for GRP Pipe Line 700 mm - (RD-L-9)-Z4-L09-ST | 2026-11-10 → 2027-04-15 (+156d) | 2026-11-11 → 2027-04-17 (+157d) |  |  |  |
| RHD4CZ4L09ST1503 | Backfilling and warning tape works for GRP Pipe Line 700 mm - (RD-L-9)-Z4-L09-ST | 2026-11-12 → 2027-04-18 (+157d) | 2026-11-14 → 2027-04-19 (+156d) |  |  |  |
| 2603 | **RHD4-02-002-L09-(ST)-GRP Pipes - 600 mm diameter** | 2026-10-27 → 2027-04-01 (+156d) | 2026-11-16 → 2027-04-21 (+156d) |  |  |  |
| RHD4CZ4L09ST1102 | Excavation works for GRP Pipe Line 600 mm - (RD-L-9)-Z4-L09-ST | 2026-10-27 → 2027-04-01 (+156d) | 2026-10-28 → 2027-04-03 (+157d) |  |  |  |
| RHD4CZ4L09ST1202 | Bedding works for GRP Pipe Line 600 mm - (RD-L-9)-Z4-L09-ST | 2026-10-29 → 2027-04-04 (+157d) | 2026-10-31 → 2027-04-05 (+156d) |  |  |  |
| RHD4CZ4L09ST1302 | Installing for GRP Pipe Line 600 mm - (RD-L-9)-Z4-L09-ST | 2026-11-01 → 2027-04-06 (+156d) | 2026-11-02 → 2027-04-07 (+156d) |  |  |  |
| RHD4CZ4L09ST1402 | Primary Test for GRP Pipe Line 600 mm - (RD-L-9)-Z4-L09-ST | 2026-11-12 → 2027-04-18 (+157d) | 2026-11-14 → 2027-04-19 (+156d) |  |  |  |
| RHD4CZ4L09ST1502 | Backfilling and warning tape works for GRP Pipe Line 600 mm - (RD-L-9)-Z4-L09-ST | 2026-11-15 → 2027-04-20 (+156d) | 2026-11-16 → 2027-04-21 (+156d) |  |  |  |
| 2615 | **RHD4-02-002-L09-(ST)-UPVC Pipes - 300 mm diameter** | 2026-10-27 → 2027-04-01 (+156d) | 2026-12-02 → 2027-05-08 (+157d) |  |  |  |
| RHD4CZ4L09ST2100 | Excavation works for UPVC Pipe Line 300 mm - (RD-L-9)-Z4-L09-ST | 2026-10-27 → 2027-04-01 (+156d) | 2026-10-31 → 2027-04-05 (+156d) |  |  |  |
| RHD4CZ4L09ST2200 | Bedding works for UPVC Pipe Line 300 mm - (RD-L-9)-Z4-L09-ST | 2026-11-01 → 2027-04-06 (+156d) | 2026-11-03 → 2027-04-08 (+156d) |  |  |  |
| RHD4CZ4L09ST2300 | Installing for UPVC Pipe Line 300 mm - (RD-L-9)-Z4-L09-ST | 2026-11-04 → 2027-04-10 (+157d) | 2026-11-08 → 2027-04-13 (+156d) |  |  |  |
| RHD4CZ4L09ST2400 | Primary Test for UPVC Pipe Line 300 mm - (RD-L-9)-Z4-L09-ST | 2026-11-09 → 2027-04-14 (+156d) | 2026-11-11 → 2027-04-17 (+157d) |  |  |  |
| RHD4CZ4L09ST2500 | Backfilling and warning tape works for UPVC Pipe Line 300 mm - (RD-L-9)-Z4-L09-ST | 2026-11-29 → 2027-05-04 (+156d) | 2026-12-02 → 2027-05-08 (+157d) |  |  |  |
| 2623 | **RHD4-02-002-L09-(ST)-Concrete Encasement** | 2026-11-07 → 2027-04-12 (+156d) | 2026-11-08 → 2027-04-13 (+156d) |  |  |  |
| RHD4CZ4L09ST6100 | Pipe Encasement for Storm Pipelines - (RD-L-9)-Z4-L09-ST | 2026-11-07 → 2027-04-12 (+156d) | 2026-11-08 → 2027-04-13 (+156d) |  |  |  |
| 2624 | **RHD4-02-002-Z4-L09-Catch Basin - ST** | 2026-11-01 → 2026-10-27 (-5d) | 2026-12-05 → 2027-05-10 (+156d) |  |  |  |
| 2625 | **RHD4-02-002-L09-(ST)-Single Catch Basin Works** | 2026-11-01 → 2026-10-27 (-5d) | 2026-12-05 → 2027-05-10 (+156d) |  |  |  |
| RHD4CZ4L09ST7100 | Excavation works for Single Catch Basin - (RD-L-9)-Z4-L09-ST | 2026-11-01 → 2026-10-27 A (-5d) | 2026-11-05 → 2027-04-11 (+157d) |  | 0% → 27% |  |
| RHD4CZ4L09ST7200 | PC Blinding, Installation and Pipe connection for Single Catch Basin - (RD-L-9)-Z4-L09-ST | 2026-11-07 → 2026-10-29 A (-9d) | 2026-11-11 → 2027-04-17 (+157d) |  | 0% → 11% |  |
| RHD4CZ4L09ST7300 | Rings & C.Slab & Final Backfill for Single Catch Basin - (RD-L-9)-Z4-L09-ST | 2026-11-12 → 2027-04-18 (+157d) | 2026-11-18 → 2027-04-24 (+157d) |  |  |  |
| RHD4CZ4L09ST7400 | Steel Cover for Single Catch Basin - (RD-L-9)-Z4-L09-ST | 2026-11-19 → 2027-04-25 (+157d) | 2026-11-24 → 2027-04-29 (+156d) |  |  |  |
| RHD4CZ4L09ST7500 | Finishing and Insulation works for Single Catch Basin - (RD-L-9)-Z4-L09-ST | 2026-11-25 → 2027-05-01 (+157d) | 2026-12-05 → 2027-05-10 (+156d) |  |  | resources Skilled labor [98.01 h]; Unskilled Labor [196.03 h]; Equipment Opreator [19.6 h]; Boom Truck [19.6 h]; Single Catch basin - ST [6.75 nr] → Skilled labor [98.01 h]; Unskilled Labor [196 h]; Equipment Opreator [19.6 h]; Boom Truck [19.6 h]; Single Catch basin - ST [6.75 nr] |
| 2649 | **RHD4-02-002-Z4-L09-Sewage Network - SW** | 2026-11-17 → 2026-10-20 (-28d) | 2026-12-15 → 2027-07-05 (+202d) |  |  |  |
| 957 | **RHD4-02-002-L09-(SW)-MH Works - 1200 mm diameter with Back drop** | 2026-11-17 → 2027-04-22 (+156d) | 2026-11-28 → 2027-05-03 (+156d) |  |  |  |
| RHD4CZ4L09SW3101 | Excavation and PC Blinding works for MH 1200 mm - (RD-L-9)-Z4-L09-SW | 2026-11-17 → 2027-04-22 (+156d) | 2026-11-18 → 2027-04-24 (+157d) |  |  |  |
| RHD4CZ4L09SW3201 | Installation of Base for MH 1200 mm - (RD-L-9)-Z4-L09-SW | 2026-11-19 → 2027-04-25 (+157d) | 2026-11-21 → 2027-04-26 (+156d) |  |  |  |
| RHD4CZ4L09SW3301 | MH Ring and C.Slab works and Backfilling works for MH 1200 mm - (RD-L-9)-Z4-L09-SW | 2026-11-22 → 2027-04-27 (+156d) | 2026-11-23 → 2027-04-28 (+156d) |  |  | resources Skilled labor [5.45 h]; Unskilled Labor [5.45 h]; Equipment Opreator [3.81 h]; Boom Truck [2.18 h]; Concrete Mixer Truck [1.63 h]; MH (1200mm Diameter) - SW - depth 2.51- 3.5 m with back drop [0.35 nr] → Skilled labor [5.45 h]; Unskilled Labor [5.45 h]; Equipment Opreator [3.81 h]; Boom Truck [2.18 h]; Concrete Mixer Truck [1.6 h]; MH (1200mm Diameter) - SW - depth 2.51- 3.5 m with back drop [0.35 nr] |
| RHD4CZ4L09SW3401 | Steel Cover for MH 1200 mm - (RD-L-9)-Z4-L09-SW | 2026-11-24 → 2027-04-29 (+156d) | 2026-11-25 → 2027-05-01 (+157d) |  |  | resources Skilled labor [3.59 h]; Unskilled Labor [7.3 h]; Equipment Opreator [0.76 h]; Boom Truck [0.76 h]; MH (1200mm Diameter) - SW - depth 2.51- 3.5 m with back drop [0.05 nr] → Skilled labor [3.59 h]; Unskilled Labor [7.3 h]; Equipment Opreator [0.8 h]; Boom Truck [0.8 h]; MH (1200mm Diameter) - SW - depth 2.51- 3.5 m with back drop [0.05 nr] |
| RHD4CZ4L09SW3501 | Finishing, Benching, Testing works for MH 1200 mm - (RD-L-9)-Z4-L09-SW | 2026-11-26 → 2027-05-02 (+157d) | 2026-11-28 → 2027-05-03 (+156d) |  |  |  |
| 2659 | **RHD4-02-002-L09-(SW)-MH Works - 1200 mm diameter** | 2026-11-17 → 2026-10-20 (-28d) | 2026-12-15 → 2027-07-05 (+202d) |  |  |  |
| RHD4CZ4L09SW3100 | Excavation and PC Blinding works for MH 1200 mm - (RD-L-9)-Z4-L09-SW | 2026-11-17 → 2026-10-20 A (-28d) | 2026-11-22 → 2027-04-29 (+158d) | 5d → 12d | 0% → 29% |  |
| RHD4CZ4L09SW3200 | Installation of Base for MH 1200 mm - (RD-L-9)-Z4-L09-SW | 2026-11-23 → 2026-10-22 A (-32d) | 2026-11-28 → 2027-05-11 (+164d) | 5d → 10d | 0% → 19% |  |
| RHD4CZ4L09SW3300 | MH Ring and C.Slab works and Backfilling works for MH 1200 mm - (RD-L-9)-Z4-L09-SW | 2026-11-29 → 2027-05-12 (+164d) | 2026-12-03 → 2027-06-05 (+184d) | 5d → 17d |  |  |
| RHD4CZ4L09SW3400 | Steel Cover for MH 1200 mm - (RD-L-9)-Z4-L09-SW | 2026-12-05 → 2027-06-06 (+183d) | 2026-12-09 → 2027-06-15 (+188d) | 5d → 9d |  |  |
| RHD4CZ4L09SW3500 | Finishing, Benching, Testing works for MH 1200 mm - (RD-L-9)-Z4-L09-SW | 2026-12-10 → 2027-06-16 (+188d) | 2026-12-15 → 2027-07-05 (+202d) | 5d → 17d |  |  |
| 2655 | **RHD4-02-002-L09-(SW)-UPVC Pipes - 200 mm diameter** | 2026-11-17 → 2026-10-27 (-21d) | 2026-12-10 → 2027-06-05 (+177d) |  |  |  |
| RHD4CZ4L09SW2100 | Excavation works for UPVC Pipe Line 200 mm - (RD-L-9)-Z4-L09-SW | 2026-11-17 → 2026-10-27 A (-21d) | 2026-11-19 → 2027-04-29 (+161d) | 3d → 7d | 0% → 10% |  |
| RHD4CZ4L09SW2200 | Bedding works for UPVC Pipe Line 200 mm - (RD-L-9)-Z4-L09-SW | 2026-11-21 → 2026-10-29 A (-23d) | 2026-11-23 → 2027-05-06 (+164d) | 3d → 6d | 0% → 4% |  |
| RHD4CZ4L09SW2300 | Installing for UPVC Pipe Line 200 mm - (RD-L-9)-Z4-L09-SW | 2026-11-24 → 2026-10-31 A (-24d) | 2026-12-01 → 2027-05-22 (+172d) | 7d → 9d | 0% → 4% |  |
| RHD4CZ4L09SW2400 | Primary Test for UPVC Pipe Line 200 mm - (RD-L-9)-Z4-L09-SW | 2026-12-02 → 2027-05-23 (+172d) | 2026-12-05 → 2027-05-26 (+172d) | 3d → 4d |  |  |
| RHD4CZ4L09SW2500 | Backfilling and warning tape works for UPVC Pipe Line 200 mm - (RD-L-9)-Z4-L09-SW | 2026-12-06 → 2027-05-27 (+172d) | 2026-12-10 → 2027-06-05 (+177d) | 5d → 8d |  |  |
| 2686 | **RHD4-02-002-Z4-L09-Potable Network - PT** | 2026-12-06 → 2027-05-27 (+172d) | 2027-02-10 → 2027-08-31 (+202d) |  |  |  |
| 2687 | **RHD4-02-002-L09-(PT)-HDPE Pipes - 110 mm diameter** | 2026-12-16 → 2027-07-06 (+202d) | 2027-01-02 → 2027-07-22 (+201d) |  |  |  |
| RHD4CZ4L09PT1100 | Excavation works for HDPE Pipline 110 mm - (RD-L-9)-Z4-L09-PT | 2026-12-16 → 2027-07-06 (+202d) | 2026-12-17 → 2027-07-07 (+202d) |  |  |  |
| RHD4CZ4L09PT1200 | Bedding works for HDPE Pipline 110 mm - (RD-L-9)-Z4-L09-PT | 2026-12-19 → 2027-07-08 (+201d) | 2026-12-20 → 2027-07-10 (+202d) |  |  |  |

| ID | Task | Start | Finish | Other |
| --- | --- | --- | --- | --- |
| RHD4CZ4L09PT1300 | Installing for HDPE Pipline 110 mm - (RD-L-9)-Z4-L09-PT | 2026-12-21 → 2027-07-11 (+202d) | 2026-12-22 → 2027-07-12 (+202d) |  |
| RHD4CZ4L09PT1400 | Primary Test for HDPE Pipline 110 mm - (RD-L-9)-Z4-L09-PT | 2026-12-29 → 2027-07-19 (+202d) | 2026-12-30 → 2027-07-20 (+202d) |  |
| RHD4CZ4L09PT1500 | Backfilling and warning tape works for HDPE Pipline 110 mm - (RD-L-9)-Z4-L09-PT | 2026-12-31 → 2027-07-21 (+202d) | 2027-01-02 → 2027-07-22 (+201d) |  |
| 1939 | **RHD4-02-002-L09-(PT)-Wash out Valves** | 2026-12-21 → 2027-06-12 (+173d) | 2026-12-24 → 2027-06-15 (+173d) |  |
| RHD4CZ4L09PT3102 | Installation for Wash out Valves for Potable Water Network - (RD-L-9)-Z4-L09-PT | 2026-12-21 → 2027-06-12 (+173d) | 2026-12-22 → 2027-06-13 (+173d) |  |
| RHD4CZ4L09PT3202 | Stem and Service box for Wash out Valves for Potable Water Network - (RD-L-9)-Z4-L09-PT | 2026-12-23 → 2027-06-14 (+173d) | 2026-12-24 → 2027-06-15 (+173d) |  |
| 2688 | **RHD4-02-002-L09-(PT)-HDPE Pipes - 160 mm diameter** | 2026-12-16 → 2027-07-06 (+202d) | 2027-01-04 → 2027-07-25 (+202d) |  |
| RHD4CZ4L09PT1101 | Excavation works for HDPE Pipline 160 mm - (RD-L-9)-Z4-L09-PT | 2026-12-16 → 2027-07-06 (+202d) | 2026-12-19 → 2027-07-08 (+201d) | resources Skilled labor [26.68 h]; Unskilled Labor [26.68 h]; Equipment Opreator [32.02 h]; Excavator-Poclain [26.68 h]; Dump Truck [5.34 h]; HDPE (160mm Diameter) - PT - Depth: less than 1.5m [61.24 m] → Skilled labor [26.68 h]; Unskilled Labor [26.68 h]; Equipment Opreator [32 h]; Excavator-Poclain [26.68 h]; Dump Truck [5.34 h]; HDPE (160mm Diameter) - PT - Depth: less than 1.5m [61.24 m] |
| RHD4CZ4L09PT1201 | Bedding works for HDPE Pipline 160 mm - (RD-L-9)-Z4-L09-PT | 2026-12-20 → 2027-07-10 (+202d) | 2026-12-22 → 2027-07-12 (+202d) |  |
| RHD4CZ4L09PT1301 | Installing for HDPE Pipline 160 mm - (RD-L-9)-Z4-L09-PT | 2026-12-23 → 2027-07-13 (+202d) | 2026-12-28 → 2027-07-18 (+202d) |  |
| RHD4CZ4L09PT1401 | Primary Test for HDPE Pipline 160 mm - (RD-L-9)-Z4-L09-PT | 2026-12-29 → 2027-07-19 (+202d) | 2026-12-30 → 2027-07-20 (+202d) |  |
| RHD4CZ4L09PT1501 | Backfilling and warning tape works for HDPE Pipline 160 mm - (RD-L-9)-Z4-L09-PT | 2026-12-31 → 2027-07-21 (+202d) | 2027-01-04 → 2027-07-25 (+202d) |  |
| 2690 | **RHD4-02-002-L09-(PT)-HDPE Pipes - 400 mm diameter** | 2026-12-06 → 2027-05-27 (+172d) | 2027-01-05 → 2027-07-26 (+202d) |  |
| RHD4CZ4L09PT1103 | Excavation works for HDPE Pipline 400 mm - (RD-L-9)-Z4-L09-PT | 2026-12-06 → 2027-05-27 (+172d) | 2026-12-09 → 2027-05-31 (+173d) |  |
| RHD4CZ4L09PT1203 | Bedding works for HDPE Pipline 400 mm - (RD-L-9)-Z4-L09-PT | 2026-12-10 → 2027-06-01 (+173d) | 2026-12-14 → 2027-06-05 (+173d) | resources Skilled labor [27.23 h]; Unskilled Labor [75.58 h]; Plumber [10.56 h]; Equipment Opreator [65.02 h]; Excavator-Poclain [27.23 h]; Boom Truck [10.56 h]; Dump Truck [27.23 h]; HDPE (400mm Diameter) - PT - Depth: less than 1.5m [33.9 m]; HDPE (400mm Diameter) - PT - Depth: 1.51m - 2.5m [28.36 m] → Skilled labor [27.2 h]; Unskilled Labor [75.58 h]; Plumber [10.56 h]; Equipment Opreator [65.02 h]; Excavator-Poclain [27.2 h]; Boom Truck [10.56 h]; Dump Truck [27.2 h]; HDPE (400mm Diameter) - PT - Depth: less than 1.5m [33.9 m]; HDPE (400mm Diameter) - PT - Depth: 1.51m - 2.5m [28.36 m] |
| RHD4CZ4L09PT1303 | Installing for HDPE Pipline 400 mm - (RD-L-9)-Z4-L09-PT | 2026-12-15 → 2027-06-06 (+173d) | 2026-12-20 → 2027-06-10 (+172d) |  |
| RHD4CZ4L09PT1403 | Primary Test for HDPE Pipline 400 mm - (RD-L-9)-Z4-L09-PT | 2026-12-29 → 2027-07-19 (+202d) | 2026-12-31 → 2027-07-21 (+202d) |  |
| RHD4CZ4L09PT1503 | Backfilling and warning tape works for HDPE Pipline 400 mm - (RD-L-9)-Z4-L09-PT | 2027-01-02 → 2027-07-22 (+201d) | 2027-01-05 → 2027-07-26 (+202d) |  |
| 2692 | **RHD4-02-002-L09-(PT)-Gate Valves (Direct Buried)** | 2026-12-26 → 2027-07-15 (+201d) | 2027-01-09 → 2027-07-29 (+201d) |  |
| RHD4CZ4L09PT3100 | Installation for Direct Buried Gate Valves - (RD-L-9)-Z4-L09-PT | 2026-12-26 → 2027-07-15 (+201d) | 2026-12-28 → 2027-07-18 (+202d) |  |
| RHD4CZ4L09PT3200 | Stem and Service box for Direct Buried Gate Valves - (RD-L-9)-Z4-L09-PT | 2027-01-06 → 2027-07-27 (+202d) | 2027-01-09 → 2027-07-29 (+201d) |  |
| 2697 | **RHD4-02-002-L09-(PT)-Air Valve Chambers** | 2026-12-10 → 2027-06-01 (+173d) | 2026-12-19 → 2027-06-09 (+172d) |  |
| RHD4CZ4L09PT2102 | Excavation and Bedding for Air Valve Chambers for Potable Water Network - (RD-L-9)-Z4-L09-PT | 2026-12-10 → 2027-06-01 (+173d) | 2026-12-12 → 2027-06-02 (+172d) |  |
| RHD4CZ4L09PT2202 | PC works for Air Valve Chambers for Potable Water Network - (RD-L-9)-Z4-L09-PT | 2026-12-13 → 2027-06-03 (+172d) | 2026-12-14 → 2027-06-05 (+173d) |  |
| RHD4CZ4L09PT2302 | Installation for Air Valve Chambers for Potable Water Network - (RD-L-9)-Z4-L09-PT | 2026-12-15 → 2027-06-06 (+173d) | 2026-12-16 → 2027-06-07 (+173d) |  |
| RHD4CZ4L09PT2402 | Backfilling works for Air Valve Chambers for Potable Water Network - (RD-L-9)-Z4-L09-PT | 2026-12-17 → 2027-06-08 (+173d) | 2026-12-19 → 2027-06-09 (+172d) |  |
| 2698 | **RHD4-02-002-L09-(PT)-Air Valves** | 2026-12-21 → 2027-06-12 (+173d) | 2026-12-24 → 2027-06-15 (+173d) |  |
| RHD4CZ4L09PT3103 | Installation for Air Valves for Potable Water Network - (RD-L-9)-Z4-L09-PT | 2026-12-21 → 2027-06-12 (+173d) | 2026-12-22 → 2027-06-13 (+173d) |  |
| RHD4CZ4L09PT3203 | Stem and Service box for Air Valves for Potable Water Network - (RD-L-9)-Z4-L09-PT | 2026-12-23 → 2027-06-14 (+173d) | 2026-12-24 → 2027-06-15 (+173d) |  |
| 2699 | **RHD4-02-002-L09-(PT)-Fire Hydrant** | 2027-01-06 → 2027-07-27 (+202d) | 2027-02-10 → 2027-08-31 (+202d) |  |
| RHD4CZ4L09PT4100 | Excavation and Bedding and Pipe Installation for Fire Hydrant - (RD-L-9)-Z4-L09-PT | 2027-01-06 → 2027-07-27 (+202d) | 2027-01-16 → 2027-08-05 (+201d) |  |
| RHD4CZ4L09PT4200 | Valve Installation for Fire Hydrant - (RD-L-9)-Z4-L09-PT | 2027-01-17 → 2027-08-07 (+202d) | 2027-01-23 → 2027-08-12 (+201d) |  |
| RHD4CZ4L09PT4300 | Stem for Fire Hydrant - (RD-L-9)-Z4-L09-PT | 2027-01-24 → 2027-08-14 (+202d) | 2027-01-30 → 2027-08-19 (+201d) |  |
| RHD4CZ4L09PT4400 | Fire Installation for Fire Hydrant - (RD-L-9)-Z4-L09-PT | 2027-01-31 → 2027-08-21 (+202d) | 2027-02-06 → 2027-08-26 (+201d) |  |
| RHD4CZ4L09PT4500 | Protection Barriers for Fire Hydrant - (RD-L-9)-Z4-L09-PT | 2027-02-07 → 2027-08-28 (+202d) | 2027-02-10 → 2027-08-31 (+202d) | resources Unskilled Labor [39.21 h]; Plumber [39.21 h]; 3-outlet fire hydrant (2 x 2.5 inch and 1 x 4.5 inch) in the form of a separate dry vacuum cylinder [0.9 nr] → Unskilled Labor [39.2 h]; Plumber [39.2 h]; 3-outlet fire hydrant (2 x 2.5 inch and 1 x 4.5 inch) in the form of a separate dry vacuum cylinder [0.9 nr] |
| 2700 | **RHD4-02-002-L09-(PT)-Concrete Encasement** | 2026-12-24 → 2027-07-14 (+202d) | 2026-12-28 → 2027-07-18 (+202d) |  |
| RHD4CZ4L09PT5100 | Pipe Encasement for Potable Pipelines - (RD-L-9)-Z4-L09-PT | 2026-12-24 → 2027-07-14 (+202d) | 2026-12-28 → 2027-07-18 (+202d) |  |
| 1747 | **RHD4-02-002-L09-(PT)-Butterfly Valve Chamber** | 2026-12-19 → 2027-07-08 (+201d) | 2026-12-27 → 2027-07-17 (+202d) |  |
| RHD4CZ4L09PT2100 | Excavation and Bedding for Butterfly Valve Chamber for Potable Water Network - (RD-L-9)-Z4-L09-PT | 2026-12-19 → 2027-07-08 (+201d) | 2026-12-20 → 2027-07-10 (+202d) |  |
| RHD4CZ4L09PT2200 | PC works for Butterfly Valve Chamber for Potable Water Network - (RD-L-9)-Z4-L09-PT | 2026-12-21 → 2027-07-11 (+202d) | 2026-12-22 → 2027-07-12 (+202d) |  |
| RHD4CZ4L09PT2300 | Installation for Butterfly Valve Chamber for Potable Water Network - (RD-L-9)-Z4-L09-PT | 2026-12-23 → 2027-07-13 (+202d) | 2026-12-24 → 2027-07-14 (+202d) |  |
| RHD4CZ4L09PT2400 | Backfilling works for Butterfly Valve Chamber for Potable Water Network - (RD-L-9)-Z4-L09-PT | 2026-12-26 → 2027-07-15 (+201d) | 2026-12-27 → 2027-07-17 (+202d) |  |
| 1748 | **RHD4-02-002-L09-(PT)-Butterfly Valves** | 2026-12-26 → 2027-07-15 (+201d) | 2026-12-29 → 2027-07-19 (+202d) |  |
| RHD4CZ4L09PT3101 | Installation for Butterfly Valves for Potable Water Network - (RD-L-9)-Z4-L09-PT | 2026-12-26 → 2027-07-15 (+201d) | 2026-12-27 → 2027-07-17 (+202d) |  |
| RHD4CZ4L09PT3201 | Stem and Service box for Butterfly Valves for Potable Water Network - (RD-L-9)-Z4-L09-PT | 2026-12-28 → 2027-07-18 (+202d) | 2026-12-29 → 2027-07-19 (+202d) |  |
| 1938 | **RHD4-02-002-L09-(PT)-Wash out Valve Chambers** | 2026-12-19 → 2027-07-08 (+201d) | 2026-12-27 → 2027-07-17 (+202d) |  |
| RHD4CZ4L09PT2101 | Excavation and Bedding for Wash out Valve Chambers for Potable Water Network - (RD-L-9)-Z4-L09-PT | 2026-12-19 → 2027-07-08 (+201d) | 2026-12-20 → 2027-07-10 (+202d) |  |
| RHD4CZ4L09PT2201 | PC works for Wash out Valve Chambers for Potable Water Network - (RD-L-9)-Z4-L09-PT | 2026-12-21 → 2027-07-11 (+202d) | 2026-12-22 → 2027-07-12 (+202d) |  |
| RHD4CZ4L09PT2301 | Installation for Wash out Valve Chambers for Potable Water Network - (RD-L-9)-Z4-L09-PT | 2026-12-23 → 2027-07-13 (+202d) | 2026-12-24 → 2027-07-14 (+202d) |  |
| RHD4CZ4L09PT2401 | Backfilling works for Wash out Valve Chambers for Potable Water Network - (RD-L-9)-Z4-L09-PT | 2026-12-26 → 2027-07-15 (+201d) | 2026-12-27 → 2027-07-17 (+202d) |  |
| 2701 | **RHD4-02-002-Z4-L09-Irrigation Network - IRR** | 2026-12-16 → 2027-07-06 (+202d) | 2027-01-21 → 2027-08-11 (+202d) |  |
| 2702 | **RHD4-02-002-L09-(IRR)-HDPE Pipes - 160 mm diameter** | 2026-12-16 → 2027-07-06 (+202d) | 2027-01-21 → 2027-08-11 (+202d) |  |
| RHD4CZ4L09IRR1100 | Excavation works for HDPE Pipline 160 mm - (RD-L-9)-Z4-L09-IRR | 2026-12-16 → 2027-07-06 (+202d) | 2026-12-23 → 2027-07-13 (+202d) |  |
| RHD4CZ4L09IRR1200 | Bedding works for HDPE Pipline 160 mm - (RD-L-9)-Z4-L09-IRR | 2026-12-24 → 2027-07-14 (+202d) | 2026-12-31 → 2027-07-21 (+202d) |  |
| RHD4CZ4L09IRR1300 | Installing for HDPE Pipline 160 mm - (RD-L-9)-Z4-L09-IRR | 2027-01-02 → 2027-07-22 (+201d) | 2027-01-09 → 2027-07-29 (+201d) |  |
| RHD4CZ4L09IRR1400 | Primary Test for HDPE Pipline 160 mm - (RD-L-9)-Z4-L09-IRR | 2027-01-10 → 2027-07-31 (+202d) | 2027-01-13 → 2027-08-03 (+202d) |  |
| RHD4CZ4L09IRR1500 | Backfilling and warning tape works for HDPE Pipline 160 mm - (RD-L-9)-Z4-L09-IRR | 2027-01-14 → 2027-08-04 (+202d) | 2027-01-21 → 2027-08-11 (+202d) |  |
| 2710 | **RHD4-02-002-L09-(IRR)-Gate Valves (Direct Buried)** | 2027-01-05 → 2027-07-26 (+202d) | 2027-01-13 → 2027-08-03 (+202d) |  |
| RHD4CZ4L09IRR3100 | Installation for Direct Buried Gate Valves - (RD-L-9)-Z4-L09-IRR | 2027-01-05 → 2027-07-26 (+202d) | 2027-01-09 → 2027-07-29 (+201d) |  |
| RHD4CZ4L09IRR3200 | Stem and Service box for Direct Buried Gate Valves - (RD-L-9)-Z4-L09-IRR | 2027-01-10 → 2027-07-31 (+202d) | 2027-01-13 → 2027-08-03 (+202d) |  |
| 2713 | **RHD4-02-002-L09-(IRR)-Wash out Chamber** | 2027-01-10 → 2027-07-31 (+202d) | 2027-01-18 → 2027-08-08 (+202d) |  |
| RHD4CZ4L09IRR2101 | Excavation and Bedding for Wash out Chamber for Irrigation Network - (RD-L-9)-Z4-L09-IRR | 2027-01-10 → 2027-07-31 (+202d) | 2027-01-11 → 2027-08-01 (+202d) | resources Skilled labor [16.34 h]; Unskilled Labor [16.34 h]; Equipment Opreator [3.27 h]; Excavator-Poclain [1.63 h]; Dump Truck [1.63 h]; Wash out chambers - TSE [0.75 nr] → Skilled labor [16.34 h]; Unskilled Labor [16.34 h]; Equipment Opreator [3.27 h]; Excavator-Poclain [1.6 h]; Dump Truck [1.6 h]; Wash out chambers - TSE [0.75 nr] |
| RHD4CZ4L09IRR2201 | PC works for Wash out Chamber for Irrigation Network - (RD-L-9)-Z4-L09-IRR | 2027-01-12 → 2027-08-02 (+202d) | 2027-01-13 → 2027-08-03 (+202d) | resources Skilled labor [16.34 h]; Unskilled Labor [32.67 h]; Equipment Opreator [1.63 h]; Concrete Pump [1.63 h]; Wash out chambers - TSE [0.3 nr] → Skilled labor [16.34 h]; Unskilled Labor [32.67 h]; Equipment Opreator [1.6 h]; Concrete Pump [1.6 h]; Wash out chambers - TSE [0.3 nr] |
| RHD4CZ4L09IRR2301 | Installation for Wash out Chamber for Irrigation Network - (RD-L-9)-Z4-L09-IRR | 2027-01-14 → 2027-08-04 (+202d) | 2027-01-16 → 2027-08-05 (+201d) |  |
| RHD4CZ4L09IRR2401 | Backfilling works for Wash out Chamber for Irrigation Network - (RD-L-9)-Z4-L09-IRR | 2027-01-17 → 2027-08-07 (+202d) | 2027-01-18 → 2027-08-08 (+202d) | resources Skilled labor [16.34 h]; Unskilled Labor [32.67 h]; Equipment Opreator [3.27 h]; Water Truck [1.63 h]; Dump Truck [1.63 h]; Wash out chambers - TSE [0.3 nr] → Skilled labor [16.34 h]; Unskilled Labor [32.67 h]; Equipment Opreator [3.27 h]; Water Truck [1.6 h]; Dump Truck [1.6 h]; Wash out chambers - TSE [0.3 nr] |
| 2714 | **RHD4-02-002-L09-(IRR)-Wash out Valves** | 2027-01-17 → 2027-08-07 (+202d) | 2027-01-20 → 2027-08-10 (+202d) |  |
| RHD4CZ4L09IRR3102 | Installation for Wash out Valve for Irrigation Network - (RD-L-9)-Z4-L09-IRR | 2027-01-17 → 2027-08-07 (+202d) | 2027-01-18 → 2027-08-08 (+202d) |  |
| RHD4CZ4L09IRR3202 | Stem and Service box for Wash out Valve for Irrigation Network - (RD-L-9)-Z4-L09-IRR | 2027-01-19 → 2027-08-09 (+202d) | 2027-01-20 → 2027-08-10 (+202d) |  |
| 2735 | **RHD4-02-002-Z4-L09-Medium Voltage Network - MV** | 2027-01-07 → 2027-06-17 (+161d) | 2027-02-13 → 2027-08-21 (+189d) |  |
| 2736 | **RHD4-02-002-L09-(MV)-Medium Voltage cable trench** | 2027-01-07 → 2027-06-17 (+161d) | 2027-02-01 → 2027-07-21 (+170d) |  |

| ID | Task | Start | Finish | Duration | Other |
| --- | --- | --- | --- | --- | --- |
| RHD4CZ4L09MV1100 | Excavation for Medium Voltage Trench - (RD-L-9)-Z4-L09-MV | 2027-01-07 → 2027-06-17 (+161d) | 2027-01-13 → 2027-06-23 (+161d) |  |  |
| RHD4CZ4L09MV1200 | Trench Backfilling for Medium Voltage Network - (RD-L-9)-Z4-L09-MV | 2027-01-26 → 2027-07-15 (+170d) | 2027-02-01 → 2027-07-21 (+170d) |  |  |
| 2738 | **RHD4-02-002-L09-(MV)-Medium Voltage cables 3Cx 500 mm²** | 2027-01-14 → 2027-06-24 (+161d) | 2027-02-13 → 2027-08-08 (+176d) |  |  |
| RHD4CZ4L09MV3100 | Installation of Medium Voltage Cables 3Cx 500 mm² - (RD-L-9)-Z4-L09-MV | 2027-01-14 → 2027-06-24 (+161d) | 2027-01-19 → 2027-07-08 (+170d) | 5d → 13d |  |
| RHD4CZ4L09MV3200 | Joints Installation of Medium Voltage Cables 3Cx 500 mm² - (RD-L-9)-Z4-L09-MV | 2027-01-20 → 2027-07-10 (+171d) | 2027-01-25 → 2027-07-14 (+170d) |  | resources Skilled labor [49.01 h]; Unskilled Labor [196.03 h]; Electrician [98.01 h]; Equipment Opreator [49.01 h]; Boom Truck [49.01 h]; Straight joints cables for 13.8 kv 3Cx 500 mm², Al /XLPE/LLDPE [9 Unit] → Skilled labor [49.01 h]; Unskilled Labor [196 h]; Electrician [98.01 h]; Equipment Opreator [49.01 h]; Boom Truck [49.01 h]; Straight joints cables for 13.8 kv 3Cx 500 mm², Al /XLPE/LLDPE [9 Unit] |
| RHD4CZ4L09MV3300 | Testing of Medium Voltage Cables 3Cx 500 mm² - (RD-L-9)-Z4-L09-MV | 2027-02-02 → 2027-07-22 (+170d) | 2027-02-07 → 2027-08-05 (+179d) | 5d → 13d |  |
| RHD4CZ4L09MV3400 | Termination of Medium Voltage Cables 3Cx 500 mm² - (RD-L-9)-Z4-L09-MV | 2027-02-08 → 2027-08-07 (+180d) | 2027-02-13 → 2027-08-08 (+176d) | 5d → 2d |  |
| 2739 | **RHD4-02-002-L09-(MV)-Medium Voltage cables 3Cx 50 mm²** | 2027-01-14 → 2027-06-24 (+161d) | 2027-02-06 → 2027-07-26 (+170d) |  |  |
| RHD4CZ4L09MV3101 | Installation of Medium Voltage Cables 3Cx 50 mm² - (RD-L-9)-Z4-L09-MV | 2027-01-14 → 2027-06-24 (+161d) | 2027-01-16 → 2027-06-26 (+161d) |  |  |
| RHD4CZ4L09MV3301 | Testing of Medium Voltage Cables 3Cx 50 mm² - (RD-L-9)-Z4-L09-MV | 2027-02-02 → 2027-07-22 (+170d) | 2027-02-03 → 2027-07-24 (+171d) |  |  |
| RHD4CZ4L09MV3401 | Termination of Medium Voltage Cables 3Cx 50 mm² - (RD-L-9)-Z4-L09-MV | 2027-02-04 → 2027-07-25 (+171d) | 2027-02-06 → 2027-07-26 (+170d) |  |  |
| 2740 | **RHD4-02-002-L09-(MV)-Normally open Point (Outdoor Type)** | 2027-01-18 → 2027-07-07 (+170d) | 2027-01-21 → 2027-07-11 (+171d) |  |  |
| RHD4CZ4L09MV4100 | Installation for Normally open Point - (RD-L-9)-Z4-L09-MV | 2027-01-18 → 2027-07-07 (+170d) | 2027-01-19 → 2027-07-08 (+170d) |  |  |
| RHD4CZ4L09MV4200 | Termination for Normally open Point - (RD-L-9)-Z4-L09-MV | 2027-01-20 → 2027-07-10 (+171d) | 2027-01-21 → 2027-07-11 (+171d) |  |  |
| 2741 | **RHD4-02-002-L09-(MV)-Unit Substations** | 2027-02-02 → 2027-07-22 (+170d) | 2027-02-10 → 2027-08-21 (+192d) |  |  |
| RHD4CZ4L09MV5100 | Excavation for Unit Substations for Medium Voltage Network - (RD-L-9)-Z4-L09-MV | 2027-02-02 → 2027-07-22 (+170d) | 2027-02-03 → 2027-07-26 (+173d) | 2d → 4d |  |
| RHD4CZ4L09MV5200 | Concrete Base Placement for Unit Substations for Medium Voltage Network - (RD-L-9)-Z4-L09-MV | 2027-02-04 → 2027-07-27 (+173d) | 2027-02-06 → 2027-07-31 (+175d) | 2d → 4d |  |
| RHD4CZ4L09MV5300 | Installation for Fences and doors for Medium Voltage Network - (RD-L-9)-Z4-L09-MV | 2027-02-07 → 2027-08-01 (+175d) | 2027-02-08 → 2027-08-11 (+184d) | 2d → 10d |  |
| RHD4CZ4L09MV5400 | Installation for Unit Substations for Medium Voltage Network - (RD-L-9)-Z4-L09-MV | 2027-02-09 → 2027-08-12 (+184d) | 2027-02-10 → 2027-08-21 (+192d) | 2d → 8d |  |
| 2742 | **RHD4-02-002-Z4-L09-Low Voltage Network - LV** | 2026-12-24 → 2027-07-14 (+202d) | 2027-03-23 → 2027-10-07 (+198d) |  |  |
| 2743 | **RHD4-02-002-L09-(LV)-Low Voltage duct banks** | 2026-12-24 → 2027-07-14 (+202d) | 2027-01-02 → 2027-07-22 (+201d) |  |  |
| RHD4CZ4L09LV2100 | Excavation of Duct Banks for Low Voltage Network - (RD-L-9)-Z4-L09-LV | 2026-12-24 → 2027-07-14 (+202d) | 2026-12-26 → 2027-07-15 (+201d) |  |  |
| RHD4CZ4L09LV2200 | Installation of Duct Banks for Low Voltage Network - (RD-L-9)-Z4-L09-LV | 2026-12-27 → 2027-07-17 (+202d) | 2026-12-28 → 2027-07-18 (+202d) |  |  |
| RHD4CZ4L09LV2300 | Pouring of Duct Banks for Low Voltage Network - (RD-L-9)-Z4-L09-LV | 2026-12-29 → 2027-07-19 (+202d) | 2026-12-30 → 2027-07-20 (+202d) |  | resources Skilled labor [11.87 h]; Unskilled Labor [11.87 h]; Equipment Opreator [4.79 h]; Concrete Mixer Truck [2.4 h]; Concrete Pump [2.4 h]; Duct bank for LV cables UPVC (2xø110mm) [10.62 m] → Skilled labor [11.87 h]; Unskilled Labor [11.87 h]; Equipment Opreator [4.8 h]; Concrete Mixer Truck [2.4 h]; Concrete Pump [2.4 h]; Duct bank for LV cables UPVC (2xø110mm) [10.62 m] |
| RHD4CZ4L09LV2400 | Backfilling of Duct Banks for Low Voltage Network - (RD-L-9)-Z4-L09-LV | 2026-12-31 → 2027-07-21 (+202d) | 2027-01-02 → 2027-07-22 (+201d) |  |  |
| 2745 | **RHD4-02-002-L09-(LV)-Low Voltage cables** | 2027-03-04 → 2027-09-21 (+201d) | 2027-03-16 → 2027-09-30 (+198d) |  |  |
| RHD4CZ4L09LV3100 | Excavation for Low Voltage Cables for Low Voltage Network - (RD-L-9)-Z4-L09-LV | 2027-03-04 → 2027-09-21 (+201d) | 2027-03-06 → 2027-09-22 (+200d) |  |  |
| RHD4CZ4L09LV3200 | Cable Laying of Low Voltage Cables for Low Voltage Network - (RD-L-9)-Z4-L09-LV | 2027-03-07 → 2027-09-25 (+202d) | 2027-03-08 → 2027-09-26 (+202d) |  | resources Skilled labor [3.38 h]; Unskilled Labor [13.61 h]; Electrician [6.86 h]; Equipment Opreator [10.24 h]; Boom Truck [3.38 h]; Cable Laying Machine [6.86 h]; Cable, Copper 4x185mm2/ CU/XLPE/PVC [50.76 m]; Cable, Copper 4x50mm2/ CU/XLPE/PVC +1x25mm2 CU/PVC [5.69 m] → Skilled labor [3.38 h]; Unskilled Labor [13.6 h]; Electrician [6.86 h]; Equipment Opreator [10.24 h]; Boom Truck [3.38 h]; Cable Laying Machine [6.86 h]; Cable, Copper 4x185mm2/ CU/XLPE/PVC [50.76 m]; Cable, Copper 4x50mm2/ CU/XLPE/PVC +1x25mm2 CU/PVC [5.69 m] |
| RHD4CZ4L09LV3300 | Warning tape and Backfill for Low Voltage Cables for Low Voltage Network - (RD-L-9)-Z4-L09-LV | 2027-03-13 → 2027-09-27 (+198d) | 2027-03-14 → 2027-09-28 (+198d) |  | resources Skilled labor [3.38 h]; Unskilled Labor [13.61 h]; Electrician [6.86 h]; Equipment Opreator [3.38 h]; Boom Truck [3.38 h]; Cable, Copper 4x185mm2/ CU/XLPE/PVC [12.69 m]; Cable, Copper 4x50mm2/ CU/XLPE/PVC +1x25mm2 CU/PVC [1.42 m] → Skilled labor [3.38 h]; Unskilled Labor [13.6 h]; Electrician [6.86 h]; Equipment Opreator [3.38 h]; Boom Truck [3.38 h]; Cable, Copper 4x185mm2/ CU/XLPE/PVC [12.69 m]; Cable, Copper 4x50mm2/ CU/XLPE/PVC +1x25mm2 CU/PVC [1.42 m] |
| RHD4CZ4L09LV3400 | Testing of Low Voltage Cables for Low Voltage Network - (RD-L-9)-Z4-L09-LV | 2027-03-15 → 2027-09-29 (+198d) | 2027-03-16 → 2027-09-30 (+198d) |  |  |
| 2746 | **RHD4-02-002-L09-(LV)-Low Voltage Distribution Pillars** | 2027-03-17 → 2027-10-02 (+199d) | 2027-03-23 → 2027-10-07 (+198d) |  |  |
| RHD4CZ4L09LV4100 | Leveling for Distribution Pillars for Low Voltage Network - (RD-L-9)-Z4-L09-LV | 2027-03-17 → 2027-10-02 (+199d) | 2027-03-18 → 2027-10-03 (+199d) |  |  |
| RHD4CZ4L09LV4200 | Lean Concrete for Distribution Pillars for Low Voltage Network - (RD-L-9)-Z4-L09-LV | 2027-03-20 → 2027-10-04 (+198d) | 2027-03-21 → 2027-10-05 (+198d) |  |  |
| RHD4CZ4L09LV4300 | Installation of Distribution Pillars for Low Voltage Network - (RD-L-9)-Z4-L09-LV | 2027-03-22 → 2027-10-06 (+198d) | 2027-03-23 → 2027-10-07 (+198d) |  |  |
| 2748 | **RHD4-02-002-Z4-L09-Street Lighting Network - SL** | 2026-12-24 → 2027-07-14 (+202d) | 2027-04-10 → 2027-10-25 (+198d) |  |  |
| 2749 | **RHD4-02-002-L09-(SL)-Street Lighting duct banks** | 2026-12-24 → 2027-07-14 (+202d) | 2027-01-06 → 2027-07-27 (+202d) |  |  |
| RHD4CZ4L09SL2100 | Excavation of Duct Banks for Street Lighting Network - (RD-L-9)-Z4-L09-SL | 2026-12-24 → 2027-07-14 (+202d) | 2026-12-27 → 2027-07-17 (+202d) |  |  |
| RHD4CZ4L09SL2200 | Installation of Duct Banks for Street Lighting Network - (RD-L-9)-Z4-L09-SL | 2026-12-28 → 2027-07-18 (+202d) | 2026-12-31 → 2027-07-21 (+202d) |  |  |
| RHD4CZ4L09SL2300 | Pouring of Duct Banks for Street Lighting Network - (RD-L-9)-Z4-L09-SL | 2027-01-02 → 2027-07-22 (+201d) | 2027-01-04 → 2027-07-25 (+202d) |  |  |
| RHD4CZ4L09SL2400 | Backfilling of Duct Banks for Street Lighting Network - (RD-L-9)-Z4-L09-SL | 2027-01-05 → 2027-07-26 (+202d) | 2027-01-06 → 2027-07-27 (+202d) |  |  |
| 2750 | **RHD4-02-002-L09-(SL)-Street Lighting Drawpit** | 2027-02-02 → 2027-07-22 (+170d) | 2027-02-06 → 2027-07-26 (+170d) |  |  |
| RHD4CZ4L09SL5100 | Excavation of Drawpit size 600x600x900mm for Street Lighting Network - (RD-L-9)-Z4-L09-SL | 2027-02-02 → 2027-07-22 (+170d) | 2027-02-03 → 2027-07-24 (+171d) |  |  |
| RHD4CZ4L09SL5200 | Installation of Drawpit size 600x600x900mm for Street Lighting Network - (RD-L-9)-Z4-L09-SL | 2027-02-04 → 2027-07-25 (+171d) | 2027-02-06 → 2027-07-26 (+170d) |  |  |
| 2751 | **RHD4-02-002-L09-(SL)-Street Lighting cables** | 2027-01-28 → 2027-08-18 (+202d) | 2027-03-23 → 2027-10-07 (+198d) |  |  |
| RHD4CZ4L09SL3100 | Excavation for Street Lighting Cables for Street Lighting Network - (RD-L-9)-Z4-L09-SL | 2027-01-28 → 2027-08-18 (+202d) | 2027-02-09 → 2027-08-30 (+202d) |  |  |
| RHD4CZ4L09SL3200 | Cable Laying of Street Lighting Cables for Street Lighting Network - (RD-L-9)-Z4-L09-SL | 2027-02-10 → 2027-08-31 (+202d) | 2027-02-20 → 2027-09-09 (+201d) |  |  |
| RHD4CZ4L09SL3300 | Warning tape and Backfill for Street Lighting Cables for Street Lighting Network - (RD-L-9)-Z4-L09-SL | 2027-02-21 → 2027-09-11 (+202d) | 2027-03-03 → 2027-09-20 (+201d) |  |  |
| RHD4CZ4L09SL3400 | Testing of Street Lighting Cables for Street Lighting Network - (RD-L-9)-Z4-L09-SL | 2027-03-17 → 2027-10-02 (+199d) | 2027-03-23 → 2027-10-07 (+198d) |  | resources Skilled labor [58.37 h]; Unskilled Labor [233.6 h]; Electrician [116.85 h]; Equipment Opreator [58.37 h]; Boom Truck [58.37 h]; Cable, Copper 4x10mm2/ CU/XLPE/SWA/PVC + 1x10mm2 CU/PVC [134.08 m] → Skilled labor [58.4 h]; Unskilled Labor [233.6 h]; Electrician [116.85 h]; Equipment Opreator [58.4 h]; Boom Truck [58.4 h]; Cable, Copper 4x10mm2/ CU/XLPE/SWA/PVC + 1x10mm2 CU/PVC [134.08 m] |
| 2752 | **RHD4-02-002-L09-(SL)-Street Lighting Poles** | 2027-01-07 → 2027-07-28 (+202d) | 2027-04-10 → 2027-10-25 (+198d) |  |  |
| RHD4CZ4L09SL1100 | Excavation for RC Base for Lighting Poles for Street Lighting Network - (RD-L-9)-Z4-L09-SL | 2027-01-07 → 2027-07-28 (+202d) | 2027-01-13 → 2027-08-03 (+202d) |  |  |
| RHD4CZ4L09SL1200 | Installation for RC Base for Lighting Poles for Street Lighting Network - (RD-L-9)-Z4-L09-SL | 2027-01-14 → 2027-08-04 (+202d) | 2027-01-20 → 2027-08-10 (+202d) |  |  |
| RHD4CZ4L09SL1300 | Backfill for RC Base for Lighting Poles for Street Lighting Network - (RD-L-9)-Z4-L09-SL | 2027-01-21 → 2027-08-11 (+202d) | 2027-01-27 → 2027-08-17 (+202d) |  |  |
| RHD4CZ4L09SL1400 | Installation for Lighting Poles for Street Lighting Network - (RD-L-9)-Z4-L09-SL | 2027-03-24 → 2027-10-09 (+199d) | 2027-04-03 → 2027-10-18 (+198d) |  |  |
| RHD4CZ4L09SL1500 | Luminaire Installation for Lighting Poles for Street Lighting Network - (RD-L-9)-Z4-L09-SL | 2027-04-04 → 2027-10-19 (+198d) | 2027-04-10 → 2027-10-25 (+198d) |  |  |
| 2753 | **RHD4-02-002-L09-(SL)-Street Lighting Feeder Pillars** | 2027-03-24 → 2027-10-09 (+199d) | 2027-04-05 → 2027-10-20 (+198d) |  |  |
| RHD4CZ4L09SL4100 | Leveling for Distribution Pillars for Street Lighting Network - (RD-L-9)-Z4-L09-SL | 2027-03-24 → 2027-10-09 (+199d) | 2027-03-25 → 2027-10-10 (+199d) |  |  |
| RHD4CZ4L09SL4200 | Lean Concrete for Distribution Pillars for Street Lighting Network - (RD-L-9)-Z4-L09-SL | 2027-03-27 → 2027-10-11 (+198d) | 2027-03-28 → 2027-10-12 (+198d) |  |  |
| RHD4CZ4L09SL4300 | Installation of Distribution Pillars for Street Lighting Network - (RD-L-9)-Z4-L09-SL | 2027-04-04 → 2027-10-19 (+198d) | 2027-04-05 → 2027-10-20 (+198d) |  |  |
| 2754 | **RHD4-02-002-L09-(SL)-Street Lighting Earthing System** | 2027-04-06 → 2027-10-21 (+198d) | 2027-04-07 → 2027-10-23 (+199d) |  |  |
| RHD4CZ4L09SL6100 | Installation of Earthing for Lighting Poles and Fedder Pillers for Street Lighting Network - (RD-L-9)-Z4-L09-SL | 2027-04-06 → 2027-10-21 (+198d) | 2027-04-07 → 2027-10-23 (+199d) |  |  |
| 2760 | **RHD4-02-002-Z4-L09-Telecommunications Network - TC** | 2026-08-18 → 2027-02-17 (+183d) | 2027-03-20 → 2027-10-04 (+198d) |  |  |
| 2761 | **RHD4-02-002-L09-(TC)-Telecommunications Ducts** | 2027-01-14 → 2027-08-04 (+202d) | 2027-03-20 → 2027-10-04 (+198d) |  |  |
| RHD4CZ4L09TC2100 | Excavation of HDPE Ducts for Telecom Network - (RD-L-9)-Z4-L09-TC | 2027-01-14 → 2027-08-04 (+202d) | 2027-02-04 → 2027-08-25 (+202d) |  |  |
| RHD4CZ4L09TC2200 | Installation of HDPE Ducts for Telecom Network - (RD-L-9)-Z4-L09-TC | 2027-02-06 → 2027-08-26 (+201d) | 2027-02-17 → 2027-09-07 (+202d) |  |  |
| RHD4CZ4L09TC2400 | Backfilling of HDPE Ducts for Telecom Network - (RD-L-9)-Z4-L09-TC | 2027-02-23 → 2027-09-12 (+201d) | 2027-03-20 → 2027-10-04 (+198d) |  |  |
| 2762 | **RHD4-02-002-L09-(TC)-Telecommunications Manholes** | 2027-02-06 → 2027-08-26 (+201d) | 2027-02-21 → 2027-09-11 (+202d) |  |  |
| RHD4CZ4L09TC5100 | Excavation for Manholes for Telecom Network - (RD-L-9)-Z4-L09-TC | 2027-02-06 → 2027-08-26 (+201d) | 2027-02-13 → 2027-09-02 (+201d) |  |  |
| RHD4CZ4L09TC5200 | Installation of Manholes for Telecom Network - (RD-L-9)-Z4-L09-TC | 2027-02-14 → 2027-09-04 (+202d) | 2027-02-21 → 2027-09-11 (+202d) |  |  |
| 2763 | **RHD4-02-002-L09-(TC)-Telecomminications Road Crossings** | 2026-08-18 → 2027-02-17 (+183d) | 2026-08-26 → 2027-02-27 (+185d) |  |  |
| RHD4CZ4L09TC3100 | Excavation for Road Crossings for Telecom Network - (RD-L-9)-Z4-L09-TC | 2026-08-18 → 2027-02-17 (+183d) | 2026-08-19 → 2027-02-18 (+183d) |  |  |

| ID | Task | Start | Finish | Duration | Other |
| --- | --- | --- | --- | --- | --- |
| RHD4CZ4L09TC3200 | Installation of Road Crossings for Telecom Network - (RD-L-9)-Z4-L09-TC | 2026-08-20 → 2027-02-20 (+184d) | 2026-08-22 → 2027-02-21 (+183d) |  |  |
| RHD4CZ4L09TC3300 | Pouring of Road Crossings for Telecom Network - (RD-L-9)-Z4-L09-TC | 2026-08-23 → 2027-02-23 (+184d) | 2026-08-24 → 2027-02-24 (+184d) |  |  |
| RHD4CZ4L09TC3400 | Backfilling of Road Crossings for Telecom Network - (RD-L-9)-Z4-L09-TC | 2026-08-25 → 2027-02-25 (+184d) | 2026-08-26 → 2027-02-27 (+185d) |  |  |
| 2764 | **RHD4-02-002-Z4-L09-Information and Communication Technologies - ICT** | 2026-08-18 → 2027-02-17 (+183d) | 2027-04-13 → 2027-10-28 (+198d) |  |  |
| 2765 | **RHD4-02-002-L09-(ICT)-Information and Communication Technologies Ducts** | 2027-02-06 → 2027-08-26 (+201d) | 2027-04-13 → 2027-10-28 (+198d) |  |  |
| RHD4CZ4L09ICT2100 | Excavation of HDPE Ducts for ICT Network - (RD-L-9)-Z4-L09-ICT | 2027-02-06 → 2027-08-26 (+201d) | 2027-02-28 → 2027-09-16 (+200d) |  |  |
| RHD4CZ4L09ICT2200 | Installation of HDPE Ducts for ICT Network - (RD-L-9)-Z4-L09-ICT | 2027-03-01 → 2027-09-18 (+201d) | 2027-03-17 → 2027-10-02 (+199d) |  | resources Carpenter [12.31 h]; Skilled labor [123.17 h]; Unskilled Labor [123.17 h]; Steel Fixer [12.31 h]; (2*50mm) HDPE ducts -ICT [1179.59 m]; (2*50mm+2*32mm) HDPE ducts -ICT [578.96 m]; (2*50mm+4*32mm) HDPE ducts -ICT [19.11 m]; (2*32mm) HDPE ducts -ICT [59.73 m] → Carpenter [12.31 h]; Skilled labor [123.2 h]; Unskilled Labor [123.2 h]; Steel Fixer [12.31 h]; (2*50mm) HDPE ducts -ICT [1179.59 m]; (2*50mm+2*32mm) HDPE ducts -ICT [578.96 m]; (2*50mm+4*32mm) HDPE ducts -ICT [19.11 m]; (2*32mm) HDPE ducts -ICT [59.73 m] |
| RHD4CZ4L09ICT2400 | Backfilling of HDPE Ducts for ICT Network - (RD-L-9)-Z4-L09-ICT | 2027-03-23 → 2027-10-07 (+198d) | 2027-04-13 → 2027-10-28 (+198d) |  |  |
| 2766 | **RHD4-02-002-L09-(ICT)-Information and Communication Technologies Manholes** | 2027-03-01 → 2027-09-18 (+201d) | 2027-03-22 → 2027-10-06 (+198d) |  |  |
| RHD4CZ4L09ICT5100 | Excavation for Manholes for ICT Network - (RD-L-9)-Z4-L09-ICT | 2027-03-01 → 2027-09-18 (+201d) | 2027-03-13 → 2027-09-27 (+198d) |  |  |
| RHD4CZ4L09ICT5200 | Installation of Manholes for ICT Network - (RD-L-9)-Z4-L09-ICT | 2027-03-14 → 2027-09-28 (+198d) | 2027-03-22 → 2027-10-06 (+198d) |  |  |
| 2767 | **RHD4-02-002-L09-(ICT)-Information and Communication Technologies Road Crossings** | 2026-08-18 → 2027-02-17 (+183d) | 2026-08-26 → 2027-02-27 (+185d) |  |  |
| RHD4CZ4L09ICT3100 | Excavation for Road Crossings for ICT Network - (RD-L-9)-Z4-L09-ICT | 2026-08-18 → 2027-02-17 (+183d) | 2026-08-19 → 2027-02-18 (+183d) |  |  |
| RHD4CZ4L09ICT3200 | Installation of Road Crossings for ICT Network - (RD-L-9)-Z4-L09-ICT | 2026-08-20 → 2027-02-20 (+184d) | 2026-08-22 → 2027-02-21 (+183d) |  |  |
| RHD4CZ4L09ICT3300 | Pouring of Road Crossings for ICT Network - (RD-L-9)-Z4-L09-ICT | 2026-08-23 → 2027-02-23 (+184d) | 2026-08-24 → 2027-02-24 (+184d) |  |  |
| RHD4CZ4L09ICT3400 | Backfilling of Road Crossings for ICT Network - (RD-L-9)-Z4-L09-ICT | 2026-08-25 → 2027-02-25 (+184d) | 2026-08-26 → 2027-02-27 (+185d) |  |  |
| 2218 | **RHD4-02-002-Z4-C012** | 2026-08-18 → 2027-02-17 (+183d) | 2027-04-29 → 2027-11-14 (+199d) |  |  |
| 2397 | **RHD4-02-002-Z4-C012-Road Works - RD** | 2026-08-25 → 2027-02-25 (+184d) | 2027-04-29 → 2027-11-14 (+199d) |  |  |
| 2398 | **RHD4-02-002-C012-(RD)-Subgrade** | 2026-08-25 → 2027-02-25 (+184d) | 2026-08-30 → 2027-03-18 (+200d) |  |  |
| RHD4CZ4C012RD1100 | Supply, lay and compaction subgrade compacted thickness 300 mm for Roads - (RD-C-1 /2)-Z4-C012-RD | 2026-08-25 → 2027-02-25 (+184d) | 2026-08-30 → 2027-03-18 (+200d) | 5d → 16d | resources Skilled labor [170.54 h]; Unskilled Labor [341.09 h]; Electrician [170.54 h]; Equipment Opreator [1164.83 h]; Water Truck [56.3 h]; Roller compactor [85.27 h]; Grader [170.54 h]; Dump Truck [852.71 h]; Subgrade [8202.41 m3] → Skilled labor [170.54 h]; Unskilled Labor [341.09 h]; Electrician [170.54 h]; Equipment Opreator [1164.8 h]; Water Truck [56.3 h]; Roller compactor [85.27 h]; Grader [170.54 h]; Dump Truck [852.71 h]; Subgrade [8202.41 m3] |
| 2399 | **RHD4-02-002-C012-(RD)-Aggregate Base Course** | 2026-08-31 → 2027-03-20 (+201d) | 2026-09-05 → 2027-04-01 (+208d) |  |  |
| RHD4CZ4C012RD2100 | Supply, lay and compaction Aggregate base course compacted thickness 300 mmfor Roads - (RD-C-1 /2)-Z4-C012-RD | 2026-08-31 → 2027-03-20 (+201d) | 2026-09-05 → 2027-04-01 (+208d) | 5d → 12d | resources Skilled labor [63.16 h]; Unskilled Labor [126.33 h]; Equipment Opreator [799.68 h]; Water Truck [41.71 h]; Roller compactor [126.33 h]; Grader [126.33 h]; Dump Truck [505.31 h]; Aggregate Base Courses [5151.93 m3] → Skilled labor [63.2 h]; Unskilled Labor [126.33 h]; Equipment Opreator [799.68 h]; Water Truck [41.71 h]; Roller compactor [126.33 h]; Grader [126.33 h]; Dump Truck [505.31 h]; Aggregate Base Courses [5151.93 m3] |
| 2400 | **RHD4-02-002-C012-(RD)-Bituminous base course Two Layers, including (MC1)&(RC2)** | 2026-09-06 → 2027-04-03 (+209d) | 2027-04-14 → 2027-10-30 (+199d) |  |  |
| RHD4CZ4C012RD3100 | Supply, lay and Asphaltic base course including Prime Coat (MC1) for 1st Layer - (RD-C-1 /2)-Z4-C012-RD | 2026-09-06 → 2027-04-03 (+209d) | 2026-09-10 → 2027-04-07 (+209d) |  |  |
| RHD4CZ4C012RD3200 | Supply, lay and Asphaltic base course including Tack Coat (RC2) for 2nd Layer - (RD-C-1 /2)-Z4-C012-RD | 2027-04-10 → 2027-10-25 (+198d) | 2027-04-14 → 2027-10-30 (+199d) |  |  |
| 2402 | **RHD4-02-002-C012-(RD)-Precast Concrete Curb** | 2027-04-15 → 2027-10-31 (+199d) | 2027-04-20 → 2027-11-04 (+198d) |  |  |
| RHD4CZ4C012RD5100 | Supply and installation Precast Concrete Kerb for Roads - (RD-C-1 /2)-Z4-C012-RD | 2027-04-15 → 2027-10-31 (+199d) | 2027-04-20 → 2027-11-04 (+198d) |  |  |
| 2405 | **RHD4-02-002-C012-(RD)-Traffic Signage** | 2027-04-21 → 2027-11-06 (+199d) | 2027-04-27 → 2027-11-11 (+198d) |  |  |
| RHD4CZ4C012RD8100 | Installation of Traffic Signage for Road Network - (RD-C-1 /2)-Z4-C012-RD | 2027-04-21 → 2027-11-06 (+199d) | 2027-04-27 → 2027-11-11 (+198d) |  |  |
| 2401 | **RHD4-02-002-C012-(RD)-Bituminous concrete wearing course including tack coat (RC2)** | 2027-04-21 → 2027-11-06 (+199d) | 2027-04-24 → 2027-11-08 (+198d) |  |  |
| RHD4CZ4C012RD4100 | Supply, lay and compaction Asphaltic wearing course including tack Coat (RC2)for Road Network - (RD-C-1 /2)-Z4-C012-RD | 2027-04-21 → 2027-11-06 (+199d) | 2027-04-24 → 2027-11-08 (+198d) |  |  |
| 2404 | **RHD4-02-002-C012-(RD)-Pavement Marking** | 2027-04-25 → 2027-11-09 (+198d) | 2027-04-29 → 2027-11-14 (+199d) |  |  |
| RHD4CZ4C012RD7100 | Pavement Markings for Road Network - (RD-C-1 /2)-Z4-C012-RD | 2027-04-25 → 2027-11-09 (+198d) | 2027-04-29 → 2027-11-14 (+199d) |  |  |
| 2323 | **RHD4-02-002-Z4-C012-Irrigation Network - IRR** | 2027-01-21 → 2027-08-11 (+202d) | 2027-02-13 → 2027-09-02 (+201d) |  |  |
| 6107 | **RHD4-02-002-C012-(IRR)-HDPE Pipes - 160 mm diameter** | 2027-01-21 → 2027-08-11 (+202d) | 2027-02-01 → 2027-08-22 (+202d) |  |  |
| RHD4CZ4C012IRR1100 | Excavation works for HDPE Pipline 160 mm - (RD-C-1 /2)-Z4-C012-IRR | 2027-01-21 → 2027-08-11 (+202d) | 2027-01-23 → 2027-08-12 (+201d) |  | resources Skilled labor [4.03 h]; Unskilled Labor [4.03 h]; Equipment Opreator [4.9 h]; Excavator-Poclain [4.03 h]; Dump Truck [0.76 h]; HDPE (160mm Diameter) - TSE - Depth: less than 1.5m [5.6 m] → Skilled labor [4 h]; Unskilled Labor [4 h]; Equipment Opreator [4.9 h]; Excavator-Poclain [4 h]; Dump Truck [0.8 h]; HDPE (160mm Diameter) - TSE - Depth: less than 1.5m [5.6 m] |
| RHD4CZ4C012IRR1200 | Bedding works for HDPE Pipline 160 mm - (RD-C-1 /2)-Z4-C012-IRR | 2027-01-24 → 2027-08-14 (+202d) | 2027-01-25 → 2027-08-15 (+202d) |  |  |
| RHD4CZ4C012IRR1300 | Installing for HDPE Pipline 160 mm - (RD-C-1 /2)-Z4-C012-IRR | 2027-01-26 → 2027-08-16 (+202d) | 2027-01-27 → 2027-08-17 (+202d) |  | resources Unskilled Labor [8.17 h]; Plumber [4.03 h]; Equipment Opreator [4.03 h]; Boom Truck [4.03 h]; HDPE (160mm Diameter) - TSE - Depth: less than 1.5m [25.2 m] → Unskilled Labor [8.17 h]; Plumber [4 h]; Equipment Opreator [4 h]; Boom Truck [4 h]; HDPE (160mm Diameter) - TSE - Depth: less than 1.5m [25.2 m] |
| RHD4CZ4C012IRR1400 | Primary Test for HDPE Pipline 160 mm - (RD-C-1 /2)-Z4-C012-IRR | 2027-01-28 → 2027-08-18 (+202d) | 2027-01-30 → 2027-08-19 (+201d) |  |  |
| RHD4CZ4C012IRR1500 | Backfilling and warning tape works for HDPE Pipline 160 mm - (RD-C-1 /2)-Z4-C012-IRR | 2027-01-31 → 2027-08-21 (+202d) | 2027-02-01 → 2027-08-22 (+202d) |  |  |
| 6111 | **RHD4-02-002-C012-(IRR)-HDPE Pipes - 315 mm diameter** | 2027-01-24 → 2027-08-14 (+202d) | 2027-02-10 → 2027-08-31 (+202d) |  |  |
| RHD4CZ4C012IRR1104 | Excavation works for HDPE Pipline 315 mm - (RD-C-1 /2)-Z4-C012-IRR | 2027-01-24 → 2027-08-14 (+202d) | 2027-01-27 → 2027-08-17 (+202d) |  |  |
| RHD4CZ4C012IRR1204 | Bedding works for HDPE Pipline 315 mm - (RD-C-1 /2)-Z4-C012-IRR | 2027-01-28 → 2027-08-18 (+202d) | 2027-01-31 → 2027-08-21 (+202d) |  |  |
| RHD4CZ4C012IRR1304 | Installing for HDPE Pipline 315 mm - (RD-C-1 /2)-Z4-C012-IRR | 2027-02-01 → 2027-08-22 (+202d) | 2027-02-04 → 2027-08-25 (+202d) |  |  |
| RHD4CZ4C012IRR1404 | Primary Test for HDPE Pipline 315 mm - (RD-C-1 /2)-Z4-C012-IRR | 2027-02-06 → 2027-08-26 (+201d) | 2027-02-07 → 2027-08-28 (+202d) |  |  |
| RHD4CZ4C012IRR1504 | Backfilling and warning tape works for HDPE Pipline 315 mm - (RD-C-1 /2)-Z4-C012-IRR | 2027-02-08 → 2027-08-29 (+202d) | 2027-02-10 → 2027-08-31 (+202d) |  |  |
| 6115 | **RHD4-02-002-C012-(IRR)-Gate Valves (Direct Buried)** | 2027-02-03 → 2027-08-24 (+202d) | 2027-02-07 → 2027-08-28 (+202d) |  |  |
| RHD4CZ4C012IRR3100 | Installation for Direct Buried Gate Valves - (RD-C-1 /2)-Z4-C012-IRR | 2027-02-03 → 2027-08-24 (+202d) | 2027-02-04 → 2027-08-25 (+202d) |  |  |
| RHD4CZ4C012IRR3200 | Stem and Service box for Direct Buried Gate Valves - (RD-C-1 /2)-Z4-C012-IRR | 2027-02-06 → 2027-08-26 (+201d) | 2027-02-07 → 2027-08-28 (+202d) |  |  |
| 6116 | **RHD4-02-002-C012-(IRR)-Butterfly Valve Chamber** | 2027-02-02 → 2027-08-23 (+202d) | 2027-02-10 → 2027-08-31 (+202d) |  |  |
| RHD4CZ4C012IRR2100 | Excavation and Bedding for Butterfly Valve Chamber for Irrigation Network - (RD-C-1 /2)-Z4-C012-IRR | 2027-02-02 → 2027-08-23 (+202d) | 2027-02-03 → 2027-08-24 (+202d) |  |  |
| RHD4CZ4C012IRR2200 | PC works for Butterfly Valve Chamber for Irrigation Network - (RD-C-1 /2)-Z4-C012-IRR | 2027-02-04 → 2027-08-25 (+202d) | 2027-02-06 → 2027-08-26 (+201d) |  |  |
| RHD4CZ4C012IRR2300 | Installation for Butterfly Valve Chamber for Irrigation Network - (RD-C-1 /2)-Z4-C012-IRR | 2027-02-07 → 2027-08-28 (+202d) | 2027-02-08 → 2027-08-29 (+202d) |  |  |
| RHD4CZ4C012IRR2400 | Backfilling works for Butterfly Valve Chamber for Irrigation Network - (RD-C-1 /2)-Z4-C012-IRR | 2027-02-09 → 2027-08-30 (+202d) | 2027-02-10 → 2027-08-31 (+202d) |  |  |
| 6117 | **RHD4-02-002-C012-(IRR)-Butterfly Valves** | 2027-02-06 → 2027-08-26 (+201d) | 2027-02-13 → 2027-09-02 (+201d) |  |  |
| RHD4CZ4C012IRR3101 | Installation for Butterfly Valves for Irrigation Network - (RD-C-1 /2)-Z4-C012-IRR | 2027-02-06 → 2027-08-26 (+201d) | 2027-02-07 → 2027-08-28 (+202d) |  |  |
| RHD4CZ4C012IRR3201 | Stem and Service box for Butterfly Valves for Irrigation Network - (RD-C-1 /2)-Z4-C012-IRR | 2027-02-11 → 2027-09-01 (+202d) | 2027-02-13 → 2027-09-02 (+201d) |  |  |
| 2357 | **RHD4-02-002-Z4-C012-Medium Voltage Network - MV** | 2027-01-14 → 2027-06-24 (+161d) | 2027-02-06 → 2027-07-22 (+166d) |  |  |
| 2358 | **RHD4-02-002-C012-(MV)-Medium Voltage cable trench** | 2027-01-14 → 2027-06-24 (+161d) | 2027-01-25 → 2027-07-05 (+161d) |  |  |
| RHD4CZ4C012MV1100 | Excavation for Medium Voltage Trench - (RD-C-1 /2)-Z4-C012-MV | 2027-01-14 → 2027-06-24 (+161d) | 2027-01-19 → 2027-06-29 (+161d) |  | resources Skilled labor [50.75 h]; Unskilled Labor [101.61 h]; Equipment Opreator [152.36 h]; Excavator-Poclain [50.75 h]; Dump Truck [101.61 h]; Excavation for Trench size 60cm wide and 80cm deep ( for 2 cables) [12.1 m3]; Excavation for Trench size 180cm wide and 80cm deep (for 6 cables) [314.45 m3] → Skilled labor [50.75 h]; Unskilled Labor [101.6 h]; Equipment Opreator [152.36 h]; Excavator-Poclain [50.75 h]; Dump Truck [101.6 h]; Excavation for Trench size 60cm wide and 80cm deep ( for 2 cables) [12.1 m3]; Excavation for Trench size 180cm wide and 80cm deep (for 6 cables) [314.45 m3] |
| RHD4CZ4C012MV1200 | Trench Backfilling for Medium Voltage Network - (RD-C-1 /2)-Z4-C012-MV | 2027-01-20 → 2027-06-30 (+161d) | 2027-01-25 → 2027-07-05 (+161d) |  | resources Skilled labor [50.75 h]; Unskilled Labor [50.75 h]; Equipment Opreator [101.61 h]; Dump Truck [101.61 h]; Excavation for Trench size 60cm wide and 80cm deep ( for 2 cables) [5.18 m3]; Excavation for Trench size 180cm wide and 80cm deep (for 6 cables) [134.76 m3] → Skilled labor [50.75 h]; Unskilled Labor [50.75 h]; Equipment Opreator [101.6 h]; Dump Truck [101.6 h]; Excavation for Trench size 60cm wide and 80cm deep ( for 2 cables) [5.18 m3]; Excavation for Trench size 180cm wide and 80cm deep (for 6 cables) [134.76 m3] |
| 1982 | **RHD4-02-002-C012-(MV)-Medium Voltage cables 3Cx 50 mm²** | 2027-01-20 → 2027-06-30 (+161d) | 2027-02-06 → 2027-07-22 (+166d) |  |  |
| RHD4CZ4C012MV3101 | Installation of Medium Voltage Cables 3Cx 50 mm² - (RD-C-1 /2)-Z4-C012-MV | 2027-01-20 → 2027-06-30 (+161d) | 2027-01-21 → 2027-07-01 (+161d) |  |  |
| RHD4CZ4C012MV3301 | Testing of Medium Voltage Cables 3Cx 50 mm² - (RD-C-1 /2)-Z4-C012-MV | 2027-01-23 → 2027-07-03 (+161d) | 2027-01-24 → 2027-07-04 (+161d) |  |  |
| RHD4CZ4C012MV3401 | Termination of Medium Voltage Cables 3Cx 50 mm² - (RD-C-1 /2)-Z4-C012-MV | 2027-02-04 → 2027-07-21 (+167d) | 2027-02-06 → 2027-07-22 (+166d) |  |  |
| 2360 | **RHD4-02-002-C012-(MV)-Medium Voltage cables 3Cx 500 mm²** | 2027-01-20 → 2027-06-30 (+161d) | 2027-02-04 → 2027-07-15 (+161d) |  |  |
| RHD4CZ4C012MV3100 | Installation of Medium Voltage Cables 3Cx 500 mm² - (RD-C-1 /2)-Z4-C012-MV | 2027-01-20 → 2027-06-30 (+161d) | 2027-01-26 → 2027-07-06 (+161d) |  | resources Skilled labor [60.01 h]; Unskilled Labor [239.91 h]; Electrician [120.01 h]; Equipment Opreator [179.91 h]; Boom Truck [60.01 h]; Cable Laying Machine [120.01 h]; Cable 13.8 kV 3Cx 500 mm² Al/XLPE,/LLDPE / Unarmored [2478.43 m] → Skilled labor [60 h]; Unskilled Labor [239.91 h]; Electrician [120 h]; Equipment Opreator [179.91 h]; Boom Truck [60 h]; Cable Laying Machine [120 h]; Cable 13.8 kV 3Cx 500 mm² Al/XLPE,/LLDPE / Unarmored [2478.43 m] |
| RHD4CZ4C012MV3200 | Joints Installation of Medium Voltage Cables 3Cx 500 mm² - (RD-C-1 /2)-Z4-C012-MV | 2027-01-27 → 2027-07-07 (+161d) | 2027-01-28 → 2027-07-08 (+161d) |  |  |
| RHD4CZ4C012MV3300 | Testing of Medium Voltage Cables 3Cx 500 mm² - (RD-C-1 /2)-Z4-C012-MV | 2027-01-30 → 2027-07-10 (+161d) | 2027-02-04 → 2027-07-15 (+161d) |  | resources Skilled labor [60.01 h]; Unskilled Labor [239.91 h]; Electrician [120.01 h]; Cable 13.8 kV 3Cx 500 mm² Al/XLPE,/LLDPE / Unarmored [275.38 m] → Skilled labor [60 h]; Unskilled Labor [239.91 h]; Electrician [120 h]; Cable 13.8 kV 3Cx 500 mm² Al/XLPE,/LLDPE / Unarmored [275.38 m] |
| 1984 | **RHD4-02-002-C012-(MV)-Unit Substations** | 2027-01-26 → 2027-07-06 (+161d) | 2027-02-03 → 2027-07-20 (+167d) |  |  |

| ID | Task | Start | Finish | Duration | Complete | Other |
| --- | --- | --- | --- | --- | --- | --- |
| RHD4CZ4C012MV5100 | Excavation for Unit Substations for Medium Voltage Network - (RD-C-1 /2)-Z4-C012-MV | 2027-01-26 → 2027-07-06 (+161d) | 2027-01-27 → 2027-07-07 (+161d) |  |  |  |
| RHD4CZ4C012MV5200 | Concrete Base Placement for Unit Substations for Medium Voltage Network - (RD-C-1 /2)-Z4-C012-MV | 2027-01-28 → 2027-07-08 (+161d) | 2027-01-30 → 2027-07-10 (+161d) |  |  |  |
| RHD4CZ4C012MV5300 | Installation for Fences and doors for Medium Voltage Network - (RD-C-1 /2)-Z4-C012-MV | 2027-01-31 → 2027-07-11 (+161d) | 2027-02-01 → 2027-07-15 (+164d) | 2d → 5d |  |  |
| RHD4CZ4C012MV5400 | Installation for Unit Substations for Medium Voltage Network - (RD-C-1 /2)-Z4-C012-MV | 2027-02-02 → 2027-07-17 (+165d) | 2027-02-03 → 2027-07-20 (+167d) | 2d → 4d |  |  |
| 2364 | **RHD4-02-002-Z4-C012-Low Voltage Network - LV** | 2027-02-06 → 2027-07-17 (+161d) | 2027-03-20 → 2027-10-04 (+198d) |  |  |  |
| 2367 | **RHD4-02-002-C012-(LV)-Low Voltage cables** | 2027-02-06 → 2027-07-17 (+161d) | 2027-02-18 → 2027-07-29 (+161d) |  |  |  |
| RHD4CZ4C012LV3100 | Excavation for Low Voltage Cables for Low Voltage Network - (RD-C-1 /2)-Z4-C012-LV | 2027-02-06 → 2027-07-17 (+161d) | 2027-02-09 → 2027-07-20 (+161d) |  |  |  |
| RHD4CZ4C012LV3200 | Cable Laying of Low Voltage Cables for Low Voltage Network - (RD-C-1 /2)-Z4-C012-LV | 2027-02-10 → 2027-07-21 (+161d) | 2027-02-13 → 2027-07-24 (+161d) |  |  |  |
| RHD4CZ4C012LV3300 | Warning tape and Backfill for Low Voltage Cables for Low Voltage Network - (RD-C-1 /2)-Z4-C012-LV | 2027-02-14 → 2027-07-25 (+161d) | 2027-02-16 → 2027-07-27 (+161d) |  |  |  |
| RHD4CZ4C012LV3400 | Testing of Low Voltage Cables for Low Voltage Network - (RD-C-1 /2)-Z4-C012-LV | 2027-02-17 → 2027-07-28 (+161d) | 2027-02-18 → 2027-07-29 (+161d) |  |  |  |
| 4259 | **RHD4-02-002-C012-(LV)-Low Voltage Distribution Pillars** | 2027-02-20 → 2027-07-31 (+161d) | 2027-03-20 → 2027-10-04 (+198d) |  |  |  |
| RHD4CZ4C012LV4100 | Leveling for Distribution Pillars for Low Voltage Network - (RD-C-1 /2)-Z4-C012-LV | 2027-02-20 → 2027-07-31 (+161d) | 2027-02-21 → 2027-08-01 (+161d) |  |  |  |
| RHD4CZ4C012LV4200 | Lean Concrete for Distribution Pillars for Low Voltage Network - (RD-C-1 /2)-Z4-C012-LV | 2027-02-23 → 2027-08-02 (+160d) | 2027-02-24 → 2027-08-03 (+160d) |  |  |  |
| RHD4CZ4C012LV4300 | Installation of Distribution Pillars for Low Voltage Network - (RD-C-1 /2)-Z4-C012-LV | 2027-03-18 → 2027-10-03 (+199d) | 2027-03-20 → 2027-10-04 (+198d) |  |  |  |
| 2370 | **RHD4-02-002-Z4-C012-Street Lighting Network - SL** | 2027-01-26 → 2027-07-06 (+161d) | 2027-03-17 → 2027-10-02 (+199d) |  |  |  |
| 2371 | **RHD4-02-002-C012-(SL)-Street Lighting duct banks** | 2027-02-11 → 2027-09-01 (+202d) | 2027-02-20 → 2027-09-09 (+201d) |  |  |  |
| RHD4CZ4C012SL2100 | Excavation of Duct Banks for Street Lighting Network - (RD-C-1 /2)-Z4-C012-SL | 2027-02-11 → 2027-09-01 (+202d) | 2027-02-13 → 2027-09-02 (+201d) |  |  |  |
| RHD4CZ4C012SL2200 | Installation of Duct Banks for Street Lighting Network - (RD-C-1 /2)-Z4-C012-SL | 2027-02-14 → 2027-09-04 (+202d) | 2027-02-15 → 2027-09-05 (+202d) |  |  |  |
| RHD4CZ4C012SL2300 | Pouring of Duct Banks for Street Lighting Network - (RD-C-1 /2)-Z4-C012-SL | 2027-02-16 → 2027-09-06 (+202d) | 2027-02-17 → 2027-09-07 (+202d) |  |  |  |
| RHD4CZ4C012SL2400 | Backfilling of Duct Banks for Street Lighting Network - (RD-C-1 /2)-Z4-C012-SL | 2027-02-18 → 2027-09-08 (+202d) | 2027-02-20 → 2027-09-09 (+201d) |  |  |  |
| 2373 | **RHD4-02-002-C012-(SL)-Street Lighting cables** | 2027-01-26 → 2027-07-06 (+161d) | 2027-02-07 → 2027-07-18 (+161d) |  |  |  |
| RHD4CZ4C012SL3100 | Excavation for Street Lighting Cables for Street Lighting Network - (RD-C-1 /2)-Z4-C012-SL | 2027-01-26 → 2027-07-06 (+161d) | 2027-01-28 → 2027-07-08 (+161d) |  |  |  |
| RHD4CZ4C012SL3200 | Cable Laying of Street Lighting Cables for Street Lighting Network - (RD-C-1 /2)-Z4-C012-SL | 2027-01-30 → 2027-07-10 (+161d) | 2027-02-01 → 2027-07-12 (+161d) |  |  |  |
| RHD4CZ4C012SL3300 | Warning tape and Backfill for Street Lighting Cables for Street Lighting Network - (RD-C-1 /2)-Z4-C012-SL | 2027-02-02 → 2027-07-13 (+161d) | 2027-02-04 → 2027-07-15 (+161d) |  |  |  |
| RHD4CZ4C012SL3400 | Testing of Street Lighting Cables for Street Lighting Network - (RD-C-1 /2)-Z4-C012-SL | 2027-02-06 → 2027-07-17 (+161d) | 2027-02-07 → 2027-07-18 (+161d) |  |  | resources Skilled labor [14.38 h]; Unskilled Labor [57.39 h]; Electrician [28.75 h]; Equipment Opreator [14.38 h]; Boom Truck [14.38 h]; Cable, Copper 4x10mm2/ CU/XLPE/SWA/PVC + 1x10mm2 CU/PVC [32.95 m] → Skilled labor [14.4 h]; Unskilled Labor [57.39 h]; Electrician [28.75 h]; Equipment Opreator [14.4 h]; Boom Truck [14.4 h]; Cable, Copper 4x10mm2/ CU/XLPE/SWA/PVC + 1x10mm2 CU/PVC [32.95 m] |
| 2374 | **RHD4-02-002-C012-(SL)-Street Lighting Poles** | 2027-02-21 → 2027-09-11 (+202d) | 2027-03-04 → 2027-09-21 (+201d) |  |  |  |
| RHD4CZ4C012SL1100 | Excavation for RC Base for Lighting Poles for Street Lighting Network - (RD-C-1 /2)-Z4-C012-SL | 2027-02-21 → 2027-09-11 (+202d) | 2027-02-23 → 2027-09-12 (+201d) |  |  |  |
| RHD4CZ4C012SL1200 | Installation for RC Base for Lighting Poles for Street Lighting Network - (RD-C-1 /2)-Z4-C012-SL | 2027-02-24 → 2027-09-13 (+201d) | 2027-02-25 → 2027-09-14 (+201d) |  |  |  |
| RHD4CZ4C012SL1300 | Backfill for RC Base for Lighting Poles for Street Lighting Network - (RD-C-1 /2)-Z4-C012-SL | 2027-02-27 → 2027-09-15 (+200d) | 2027-02-28 → 2027-09-16 (+200d) |  |  |  |
| RHD4CZ4C012SL1400 | Installation for Lighting Poles for Street Lighting Network - (RD-C-1 /2)-Z4-C012-SL | 2027-03-01 → 2027-09-18 (+201d) | 2027-03-02 → 2027-09-19 (+201d) |  |  |  |
| RHD4CZ4C012SL1500 | Luminaire Installation for Lighting Poles for Street Lighting Network - (RD-C-1 /2)-Z4-C012-SL | 2027-03-03 → 2027-09-20 (+201d) | 2027-03-04 → 2027-09-21 (+201d) |  |  |  |
| 5023 | **RHD4-02-002-C012-(SL)-Street Lighting Feeder Pillars** | 2027-03-06 → 2027-09-22 (+200d) | 2027-03-15 → 2027-09-29 (+198d) |  |  |  |
| RHD4CZ4C012SL4100 | Leveling for Distribution Pillars for Street Lighting Network - (RD-C-1 /2)-Z4-C012-SL | 2027-03-06 → 2027-09-22 (+200d) | 2027-03-07 → 2027-09-25 (+202d) |  |  |  |
| RHD4CZ4C012SL4200 | Lean Concrete for Distribution Pillars for Street Lighting Network - (RD-C-1 /2)-Z4-C012-SL | 2027-03-08 → 2027-09-26 (+202d) | 2027-03-13 → 2027-09-27 (+198d) |  |  |  |
| RHD4CZ4C012SL4300 | Installation of Distribution Pillars for Street Lighting Network - (RD-C-1 /2)-Z4-C012-SL | 2027-03-14 → 2027-09-28 (+198d) | 2027-03-15 → 2027-09-29 (+198d) |  |  |  |
| 5024 | **RHD4-02-002-C012-(SL)-Street Lighting Earthing System** | 2027-03-16 → 2027-09-30 (+198d) | 2027-03-17 → 2027-10-02 (+199d) |  |  |  |
| RHD4CZ4C012SL6100 | Installation of Earthing for Lighting Poles and Fedder Pillers for Street Lighting Network - (RD-C-1 /2)-Z4-C012-SL | 2027-03-16 → 2027-09-30 (+198d) | 2027-03-17 → 2027-10-02 (+199d) |  |  | resources Skilled labor [0.76 h]; Unskilled Labor [0.76 h]; Equipment Opreator [1.42 h]; Excavator-Poclain [0.76 h]; Dump Truck [0.76 h]; Street Lighting Feeder pillars - ER [1 Unit] → Skilled labor [0.8 h]; Unskilled Labor [0.8 h]; Equipment Opreator [1.42 h]; Excavator-Poclain [0.8 h]; Dump Truck [0.8 h]; Street Lighting Feeder pillars - ER [1 Unit] |
| 2372 | **RHD4-02-002-C012-(SL)-Street Lighting Drawpit** | 2027-02-24 → 2027-09-13 (+201d) | 2027-02-28 → 2027-09-16 (+200d) |  |  |  |
| RHD4CZ4C012SL5100 | Excavation of Drawpit size 600x600x900mm for Street Lighting Network - (RD-C-1 /2)-Z4-C012-SL | 2027-02-24 → 2027-09-13 (+201d) | 2027-02-25 → 2027-09-14 (+201d) |  |  | resources Skilled labor [1.85 h]; Unskilled Labor [1.85 h]; Equipment Opreator [1.42 h]; Excavator-Poclain [0.76 h]; Dump Truck [0.76 h]; Drawpit with medium duty steel cover, size600x600x900mm, [0.3 Unit] → Skilled labor [1.85 h]; Unskilled Labor [1.85 h]; Equipment Opreator [1.42 h]; Excavator-Poclain [0.8 h]; Dump Truck [0.8 h]; Drawpit with medium duty steel cover, size600x600x900mm, [0.3 Unit] |
| RHD4CZ4C012SL5200 | Installation of Drawpit size 600x600x900mm for Street Lighting Network - (RD-C-1 /2)-Z4-C012-SL | 2027-02-27 → 2027-09-15 (+200d) | 2027-02-28 → 2027-09-16 (+200d) |  |  | resources Skilled labor [1.85 h]; Unskilled Labor [1.85 h]; Equipment Opreator [0.76 h]; Boom Truck [0.76 h]; Drawpit with medium duty steel cover, size600x600x900mm, [1.7 Unit] → Skilled labor [1.85 h]; Unskilled Labor [1.85 h]; Equipment Opreator [0.8 h]; Boom Truck [0.8 h]; Drawpit with medium duty steel cover, size600x600x900mm, [1.7 Unit] |
| 2382 | **RHD4-02-002-Z4-C012-Telecommunications Network - TC** | 2027-03-01 → 2027-09-18 (+201d) | 2027-03-15 → 2027-09-29 (+198d) |  |  |  |
| 2383 | **RHD4-02-002-C012-(TC)-Telecommunications Ducts** | 2027-03-01 → 2027-09-18 (+201d) | 2027-03-15 → 2027-09-29 (+198d) |  |  |  |
| RHD4CZ4C012TC2100 | Excavation of HDPE Ducts for Telecom Network - (RD-C-1 /2)-Z4-C012-TC | 2027-03-01 → 2027-09-18 (+201d) | 2027-03-03 → 2027-09-20 (+201d) |  |  |  |
| RHD4CZ4C012TC2200 | Installation of HDPE Ducts for Telecom Network - (RD-C-1 /2)-Z4-C012-TC | 2027-03-04 → 2027-09-21 (+201d) | 2027-03-08 → 2027-09-26 (+202d) |  |  |  |
| RHD4CZ4C012TC2400 | Backfilling of HDPE Ducts for Telecom Network - (RD-C-1 /2)-Z4-C012-TC | 2027-03-13 → 2027-09-27 (+198d) | 2027-03-15 → 2027-09-29 (+198d) |  |  |  |
| 2384 | **RHD4-02-002-C012-(TC)-Telecommunications Manholes** | 2027-03-04 → 2027-09-21 (+201d) | 2027-03-08 → 2027-09-26 (+202d) |  |  |  |
| RHD4CZ4C012TC5100 | Excavation for Manholes for Telecom Network - (RD-C-1 /2)-Z4-C012-TC | 2027-03-04 → 2027-09-21 (+201d) | 2027-03-06 → 2027-09-22 (+200d) |  |  | resources Skilled labor [4.14 h]; Unskilled Labor [4.14 h]; Equipment Opreator [3.27 h]; Excavator-Poclain [1.63 h]; Dump Truck [1.63 h]; Manhole Type 1 - TC [0.15 nr]; Manhole Type 2 - TC [0.15 nr] → Skilled labor [4.14 h]; Unskilled Labor [4.14 h]; Equipment Opreator [3.27 h]; Excavator-Poclain [1.6 h]; Dump Truck [1.6 h]; Manhole Type 1 - TC [0.15 nr]; Manhole Type 2 - TC [0.15 nr] |
| RHD4CZ4C012TC5200 | Installation of Manholes for Telecom Network - (RD-C-1 /2)-Z4-C012-TC | 2027-03-07 → 2027-09-25 (+202d) | 2027-03-08 → 2027-09-26 (+202d) |  |  | resources Skilled labor [4.14 h]; Unskilled Labor [4.14 h]; Equipment Opreator [1.63 h]; Boom Truck [1.63 h]; Manhole Type 1 - TC [0.85 nr]; Manhole Type 2 - TC [0.85 nr] → Skilled labor [4.14 h]; Unskilled Labor [4.14 h]; Equipment Opreator [1.6 h]; Boom Truck [1.6 h]; Manhole Type 1 - TC [0.85 nr]; Manhole Type 2 - TC [0.85 nr] |
| 2386 | **RHD4-02-002-Z4-C012-Information and Communication Technologies - ICT** | 2026-08-18 → 2027-02-17 (+183d) | 2027-04-08 → 2027-10-24 (+199d) |  |  |  |
| 2387 | **RHD4-02-002-C012-(ICT)-Information and Communication Technologies Ducts** | 2027-03-04 → 2027-09-21 (+201d) | 2027-04-08 → 2027-10-24 (+199d) |  |  |  |
| RHD4CZ4C012ICT2100 | Excavation of HDPE Ducts for ICT Network - (RD-C-1 /2)-Z4-C012-ICT | 2027-03-04 → 2027-09-21 (+201d) | 2027-03-16 → 2027-09-30 (+198d) |  |  |  |
| RHD4CZ4C012ICT2200 | Installation of HDPE Ducts for ICT Network - (RD-C-1 /2)-Z4-C012-ICT | 2027-03-17 → 2027-10-02 (+199d) | 2027-03-30 → 2027-10-14 (+198d) |  |  |  |
| RHD4CZ4C012ICT2400 | Backfilling of HDPE Ducts for ICT Network - (RD-C-1 /2)-Z4-C012-ICT | 2027-03-31 → 2027-10-16 (+199d) | 2027-04-08 → 2027-10-24 (+199d) |  |  |  |
| 2388 | **RHD4-02-002-C012-(ICT)-Information and Communication Technologies Manholes** | 2027-03-17 → 2027-10-02 (+199d) | 2027-03-21 → 2027-10-05 (+198d) |  |  |  |
| RHD4CZ4C012ICT5100 | Excavation for Manholes for ICT Network - (RD-C-1 /2)-Z4-C012-ICT | 2027-03-17 → 2027-10-02 (+199d) | 2027-03-18 → 2027-10-03 (+199d) |  |  |  |
| RHD4CZ4C012ICT5200 | Installation of Manholes for ICT Network - (RD-C-1 /2)-Z4-C012-ICT | 2027-03-20 → 2027-10-04 (+198d) | 2027-03-21 → 2027-10-05 (+198d) |  |  |  |
| 2389 | **RHD4-02-002-C012-(ICT)-Information and Communication Technologies Road Crossings** | 2026-08-18 → 2027-02-17 (+183d) | 2026-08-26 → 2027-02-27 (+185d) |  |  |  |
| RHD4CZ4C012ICT3100 | Excavation for Road Crossings for ICT Network - (RD-C-1 /2)-Z4-C012-ICT | 2026-08-18 → 2027-02-17 (+183d) | 2026-08-19 → 2027-02-18 (+183d) |  |  |  |
| RHD4CZ4C012ICT3200 | Installation of Road Crossings for ICT Network - (RD-C-1 /2)-Z4-C012-ICT | 2026-08-20 → 2027-02-20 (+184d) | 2026-08-22 → 2027-02-21 (+183d) |  |  |  |
| RHD4CZ4C012ICT3300 | Pouring of Road Crossings for ICT Network - (RD-C-1 /2)-Z4-C012-ICT | 2026-08-23 → 2027-02-23 (+184d) | 2026-08-24 → 2027-02-24 (+184d) |  |  |  |
| RHD4CZ4C012ICT3400 | Backfilling of Road Crossings for ICT Network - (RD-C-1 /2)-Z4-C012-ICT | 2026-08-25 → 2027-02-25 (+184d) | 2026-08-26 → 2027-02-27 (+185d) |  |  |  |
| 7324 | **RHD4-02-002-Z8** | 2026-08-18 → 2026-07-15 (-34d) | 2028-04-02 → 2028-11-08 (+220d) |  |  |  |
| 7703 | **RHD4-02-002-Z8-A011** | 2026-08-18 → 2026-07-15 (-34d) | 2027-11-11 → 2028-04-08 (+149d) |  |  |  |
| 7882 | **RHD4-02-002-Z8-A011-Road Works - RD** | 2026-08-27 → 2026-07-15 (-43d) | 2027-11-11 → 2028-04-08 (+149d) |  |  |  |
| 7883 | **RHD4-02-002-A011-(RD)-Subgrade** | 2026-08-27 → 2026-07-15 (-43d) | 2026-09-01 → 2026-07-27 (-36d) |  |  |  |
| RHD4CZ8A011RD1100 | Supply, lay and compaction subgrade compacted thickness 300 mm for Roads - (RD-A-1 /1)-Z8-A011-RD | 2026-08-27 → 2026-07-15 A (-43d) | 2026-09-01 → 2026-07-27 A (-36d) |  | 0% → 100% | resources Skilled labor [123.28 h]; Unskilled Labor [246.45 h]; Electrician [123.28 h]; Equipment Opreator [841.71 h]; Water Truck [40.62 h]; Roller compactor [61.64 h]; Grader [123.28 h]; Dump Truck [616.18 h]; Subgrade [7705.87 m3] → Skilled labor [123.28 h]; Unskilled Labor [246.45 h]; Electrician [123.28 h]; Equipment Opreator [841.71 h]; Water Truck [40.62 h]; Roller compactor [61.6 h]; Grader [123.28 h]; Dump Truck [616.18 h]; Subgrade [7705.87 m3] |
| 7884 | **RHD4-02-002-A011-(RD)-Aggregate Base Course** | 2026-09-02 → 2026-10-20 (+48d) | 2026-09-08 → 2027-03-15 (+188d) |  |  |  |
| RHD4CZ8A011RD2100 | Supply, lay and compaction Aggregate base course compacted thickness 300 mmfor Roads - (RD-A-1 /1)-Z8-A011-RD | 2026-09-02 → 2026-10-20 A (+48d) | 2026-09-08 → 2027-03-15 (+188d) | 6d → 11d | 0% → 50% | resources Skilled labor [59.35 h]; Unskilled Labor [118.7 h]; Equipment Opreator [751.22 h]; Water Truck [39.21 h]; Roller compactor [118.7 h]; Grader [118.7 h]; Dump Truck [474.71 h]; Aggregate Base Courses [4840.05 m3] → Skilled labor [59.35 h]; Unskilled Labor [118.7 h]; Equipment Opreator [751.2 h]; Water Truck [39.2 h]; Roller compactor [118.7 h]; Grader [118.7 h]; Dump Truck [474.71 h]; Aggregate Base Courses [4840.05 m3] |
| 7885 | **RHD4-02-002-A011-(RD)-Bituminous base course Two Layers, including (MC1)&(RC2)** | 2026-09-09 → 2027-03-16 (+188d) | 2027-10-28 → 2028-03-20 (+144d) |  |  |  |
| RHD4CZ8A011RD3100 | Supply, lay and Asphaltic base course including Prime Coat (MC1) for 1st Layer - (RD-A-1 /1)-Z8-A011-RD | 2026-09-09 → 2027-03-16 (+188d) | 2026-09-12 → 2027-03-22 (+191d) | 3d → 6d |  |  |

| ID | Task | Start | Finish | Complete | Other |
| --- | --- | --- | --- | --- | --- |
| RHD4CZ8A011RD3200 | Supply, lay and Asphaltic base course including Tack Coat (RC2) for 2nd Layer - (RD-A-1 /1)-Z8-A011-RD | 2027-10-23 → 2028-03-14 (+143d) | 2027-10-28 → 2028-03-20 (+144d) |  |  |
| 7887 | **RHD4-02-002-A011-(RD)-Precast Concrete Curb** | 2027-10-30 → 2028-03-21 (+143d) | 2027-11-02 → 2028-03-25 (+144d) |  |  |
| RHD4CZ8A011RD5100 | Supply and installation Precast Concrete Kerb for Roads - (RD-A-1 /1)-Z8-A011-RD | 2027-10-30 → 2028-03-21 (+143d) | 2027-11-02 → 2028-03-25 (+144d) |  |  |
| 7890 | **RHD4-02-002-A011-(RD)-Traffic Signage** | 2027-11-03 → 2028-03-26 (+144d) | 2027-11-09 → 2028-04-01 (+144d) |  |  |
| RHD4CZ8A011RD8100 | Installation of Traffic Signage for Road Network - (RD-A-1 /1)-Z8-A011-RD | 2027-11-03 → 2028-03-26 (+144d) | 2027-11-09 → 2028-04-01 (+144d) |  |  |
| 7886 | **RHD4-02-002-A011-(RD)-Bituminous concrete wearing course including tack coat (RC2)** | 2027-11-03 → 2028-03-26 (+144d) | 2027-11-06 → 2028-03-28 (+143d) |  |  |
| RHD4CZ8A011RD4100 | Supply, lay and compaction Asphaltic wearing course including tack Coat (RC2)for Road Network - (RD-A-1 /1)-Z8-A011-RD | 2027-11-03 → 2028-03-26 (+144d) | 2027-11-06 → 2028-03-28 (+143d) |  |  |
| 7889 | **RHD4-02-002-A011-(RD)-Pavement Marking** | 2027-11-07 → 2028-04-03 (+148d) | 2027-11-11 → 2028-04-08 (+149d) |  |  |
| RHD4CZ8A011RD7100 | Pavement Markings for Road Network - (RD-A-1 /1)-Z8-A011-RD | 2027-11-07 → 2028-04-03 (+148d) | 2027-11-11 → 2028-04-08 (+149d) |  |  |
| 7707 | **RHD4-02-002-Z8-A011-Storm Network - ST** | 2026-10-17 → 2026-08-04 (-74d) | 2026-12-22 → 2027-06-05 (+165d) |  |  |
| 7725 | **RHD4-02-002-A011-(ST)-MH Works - 1500 mm diameter** | 2026-11-24 → 2026-08-04 (-112d) | 2026-12-17 → 2027-05-10 (+144d) |  |  |
| RHD4CZ8A011ST3101 | Excavation and PC Blinding works for MH 1500 mm - (RD-A-1 /1)-Z8-A011-ST | 2026-11-24 → 2026-08-04 A (-112d) | 2026-11-29 → 2026-09-04 A (-86d) | 0% → 100% | resources Skilled labor [54.45 h]; Unskilled Labor [54.45 h]; Equipment Opreator [87.12 h]; Excavator-Poclain [54.45 h]; Water Truck [5.45 h]; Dump Truck [27.23 h]; MH (1500mm Diameter) - ST - depth 1.50 - 2.5m [2.25 nr]; MH (1500mm Diameter) - ST - depth 2.51 - 3.5m [0.25 nr] → Skilled labor [54.45 h]; Unskilled Labor [54.45 h]; Equipment Opreator [87.12 h]; Excavator-Poclain [54.45 h]; Water Truck [5.45 h]; Dump Truck [27.2 h]; MH (1500mm Diameter) - ST - depth 1.50 - 2.5m [2.25 nr]; MH (1500mm Diameter) - ST - depth 2.51 - 3.5m [0.25 nr] |
| RHD4CZ8A011ST3201 | Installation of Base for MH 1500 mm - (RD-A-1 /1)-Z8-A011-ST | 2026-11-30 → 2026-09-19 A (-72d) | 2026-12-01 → 2026-09-20 A (-72d) | 0% → 100% |  |
| RHD4CZ8A011ST3301 | MH Ring and C.Slab works and Backfilling works for MH 1500 mm - (RD-A-1 /1)-Z8-A011-ST | 2026-12-02 → 2026-09-19 A (-74d) | 2026-12-07 → 2027-04-29 (+143d) | 0% → 20% |  |
| RHD4CZ8A011ST3401 | Steel Cover for MH 1500 mm - (RD-A-1 /1)-Z8-A011-ST | 2026-12-08 → 2027-05-01 (+144d) | 2026-12-12 → 2027-05-04 (+143d) |  |  |
| RHD4CZ8A011ST3501 | Finishing, Benching, Testing works for MH 1500 mm - (RD-A-1 /1)-Z8-A011-ST | 2026-12-13 → 2027-05-05 (+143d) | 2026-12-17 → 2027-05-10 (+144d) |  |  |
| 3754 | **RHD4-02-002-A011-(ST)-MH Works - 2000 mm diameter** | 2026-11-19 → 2026-08-04 (-107d) | 2026-12-10 → 2027-05-11 (+152d) |  |  |
| RHD4CZ8A011ST3102 | Excavation and PC Blinding works for MH 2000 mm - (RD-A-1 /1)-Z8-A011-ST | 2026-11-19 → 2026-08-04 A (-107d) | 2026-11-23 → 2026-09-04 A (-80d) | 0% → 100% | resources Skilled labor [34.52 h]; Unskilled Labor [34.52 h]; Equipment Opreator [55.21 h]; Excavator-Poclain [34.52 h]; Water Truck [3.48 h]; Dump Truck [17.21 h]; MH (2000mm Diameter) - ST - depth 2.51 - 3.5m [1.25 nr]; MH (2000mm Diameter) - ST - depth 3.51 -4.5m [0.75 nr] → Skilled labor [34.52 h]; Unskilled Labor [34.52 h]; Equipment Opreator [55.2 h]; Excavator-Poclain [34.52 h]; Water Truck [3.48 h]; Dump Truck [17.21 h]; MH (2000mm Diameter) - ST - depth 2.51 - 3.5m [1.25 nr]; MH (2000mm Diameter) - ST - depth 3.51 -4.5m [0.75 nr] |
| RHD4CZ8A011ST3202 | Installation of Base for MH 2000 mm - (RD-A-1 /1)-Z8-A011-ST | 2026-11-24 → 2026-09-19 A (-66d) | 2026-11-28 → 2027-04-28 (+151d) | 0% → 49% |  |
| RHD4CZ8A011ST3302 | MH Ring and C.Slab works and Backfilling works for MH 2000 mm - (RD-A-1 /1)-Z8-A011-ST | 2026-11-29 → 2027-04-29 (+151d) | 2026-12-02 → 2027-05-03 (+152d) |  |  |
| RHD4CZ8A011ST3402 | Steel Cover for MH 2000 mm - (RD-A-1 /1)-Z8-A011-ST | 2026-12-03 → 2027-05-04 (+152d) | 2026-12-06 → 2027-05-06 (+151d) |  |  |
| RHD4CZ8A011ST3502 | Finishing, Benching, Testing works for MH 2000 mm - (RD-A-1 /1)-Z8-A011-ST | 2026-12-07 → 2027-05-08 (+152d) | 2026-12-10 → 2027-05-11 (+152d) |  |  |
| 6393 | **RHD4-02-002-A011-(ST)-GRP Pipes - 1300 mm diameter** | 2026-10-17 → 2026-08-04 (-74d) | 2026-10-31 → 2027-04-14 (+165d) |  |  |
| RHD4CZ8A011ST1109 | Excavation works for GRP Pipe Line 1300 mm - (RD-A-1 /1)-Z8-A011-ST | 2026-10-17 → 2026-08-04 A (-74d) | 2026-10-19 → 2026-08-13 A (-67d) | 0% → 100% |  |
| RHD4CZ8A011ST1209 | Bedding works for GRP Pipe Line 1300 mm - (RD-A-1 /1)-Z8-A011-ST | 2026-10-20 → 2026-08-29 A (-52d) | 2026-10-22 → 2026-08-31 A (-52d) | 0% → 100% |  |
| RHD4CZ8A011ST1309 | Installing for GRP Pipe Line 1300 mm - (RD-A-1 /1)-Z8-A011-ST | 2026-10-24 → 2026-08-30 A (-55d) | 2026-10-25 → 2026-09-05 A (-50d) | 0% → 100% | resources Unskilled Labor [31.91 h]; Plumber [16.01 h]; GRP (1300mm Diameter) - ST - Depth less than 2.5 m [85.96 m]; GRP (1300mm Diameter) - ST - Depth: 2.51m - 3.5m [83.68 m]; GRP (1300mm Diameter) - ST - Depth: 3.51m - 4.5m [9.8 m] → Unskilled Labor [31.91 h]; Plumber [16 h]; GRP (1300mm Diameter) - ST - Depth less than 2.5 m [85.96 m]; GRP (1300mm Diameter) - ST - Depth: 2.51m - 3.5m [83.68 m]; GRP (1300mm Diameter) - ST - Depth: 3.51m - 4.5m [9.8 m] |
| RHD4CZ8A011ST1509 | Backfilling and warning tape works for GRP Pipe Line 1300 mm - (RD-A-1 /1)-Z8-A011-ST | 2026-10-28 → 2026-09-06 A (-52d) | 2026-10-31 → 2026-09-09 A (-52d) | 0% → 100% |  |
| RHD4CZ8A011ST1409 | Primary Test for GRP Pipe Line 1300 mm - (RD-A-1 /1)-Z8-A011-ST | 2026-10-26 → 2027-04-13 (+169d) | 2026-10-27 → 2027-04-14 (+169d) |  |  |
| 7724 | **RHD4-02-002-A011-(ST)-MH Works - 1200 mm diameter** | 2026-11-30 → 2026-08-04 (-118d) | 2026-12-22 → 2027-05-03 (+132d) |  |  |
| RHD4CZ8A011ST3100 | Excavation and PC Blinding works for MH 1200 mm - (RD-A-1 /1)-Z8-A011-ST | 2026-11-30 → 2026-08-04 A (-118d) | 2026-12-03 → 2026-09-04 A (-90d) | 0% → 100% |  |
| RHD4CZ8A011ST3200 | Installation of Base for MH 1200 mm - (RD-A-1 /1)-Z8-A011-ST | 2026-12-05 → 2026-09-05 A (-91d) | 2026-12-08 → 2026-09-24 A (-75d) | 0% → 100% |  |
| RHD4CZ8A011ST3300 | MH Ring and C.Slab works and Backfilling works for MH 1200 mm - (RD-A-1 /1)-Z8-A011-ST | 2026-12-09 → 2026-09-19 A (-81d) | 2026-12-13 → 2026-09-22 A (-82d) | 0% → 100% |  |
| RHD4CZ8A011ST3400 | Steel Cover for MH 1200 mm - (RD-A-1 /1)-Z8-A011-ST | 2026-12-14 → 2027-04-25 (+132d) | 2026-12-17 → 2027-04-28 (+132d) |  |  |
| RHD4CZ8A011ST3500 | Finishing, Benching, Testing works for MH 1200 mm - (RD-A-1 /1)-Z8-A011-ST | 2026-12-19 → 2027-04-29 (+131d) | 2026-12-22 → 2027-05-03 (+132d) |  |  |
| 7712 | **RHD4-02-002-A011-(ST)-GRP Pipes - 800 mm diameter** | 2026-10-20 → 2026-08-04 (-77d) | 2026-11-03 → 2027-04-14 (+162d) |  |  |
| RHD4CZ8A011ST1104 | Excavation works for GRP Pipe Line 800 mm - (RD-A-1 /1)-Z8-A011-ST | 2026-10-20 → 2026-08-04 A (-77d) | 2026-10-22 → 2026-08-28 A (-55d) | 0% → 100% | resources Skilled labor [24.18 h]; Unskilled Labor [24.18 h]; Equipment Opreator [28.97 h]; Excavator-Poclain [24.18 h]; Dump Truck [4.79 h]; GRP (800mm Diameter) - ST - Depth less than 1.5 m [28.36 m]; GRP (800mm Diameter) - ST - Depth: 1.51m - 2.5m [24.05 m] → Skilled labor [24.18 h]; Unskilled Labor [24.18 h]; Equipment Opreator [28.97 h]; Excavator-Poclain [24.18 h]; Dump Truck [4.8 h]; GRP (800mm Diameter) - ST - Depth less than 1.5 m [28.36 m]; GRP (800mm Diameter) - ST - Depth: 1.51m - 2.5m [24.05 m] |
| RHD4CZ8A011ST1204 | Bedding works for GRP Pipe Line 800 mm - (RD-A-1 /1)-Z8-A011-ST | 2026-10-24 → 2026-08-29 A (-56d) | 2026-10-26 → 2026-08-31 A (-56d) | 0% → 100% |  |
| RHD4CZ8A011ST1304 | Installing for GRP Pipe Line 800 mm - (RD-A-1 /1)-Z8-A011-ST | 2026-10-27 → 2026-09-01 A (-56d) | 2026-10-28 → 2026-09-02 A (-56d) | 0% → 100% |  |
| RHD4CZ8A011ST1504 | Backfilling and warning tape works for GRP Pipe Line 800 mm - (RD-A-1 /1)-Z8-A011-ST | 2026-11-01 → 2026-09-02 A (-60d) | 2026-11-03 → 2026-09-03 A (-61d) | 0% → 100% |  |
| RHD4CZ8A011ST1404 | Primary Test for GRP Pipe Line 800 mm - (RD-A-1 /1)-Z8-A011-ST | 2026-10-29 → 2027-04-13 (+166d) | 2026-10-31 → 2027-04-14 (+165d) |  |  |
| 7711 | **RHD4-02-002-A011-(ST)-GRP Pipes - 700 mm diameter** | 2026-10-24 → 2026-08-29 (-56d) | 2026-11-05 → 2027-04-14 (+160d) |  |  |
| RHD4CZ8A011ST1103 | Excavation works for GRP Pipe Line 700 mm - (RD-A-1 /1)-Z8-A011-ST | 2026-10-24 → 2026-08-29 A (-56d) | 2026-10-25 → 2026-08-30 A (-56d) | 0% → 100% |  |
| RHD4CZ8A011ST1203 | Bedding works for GRP Pipe Line 700 mm - (RD-A-1 /1)-Z8-A011-ST | 2026-10-26 → 2026-08-31 A (-56d) | 2026-10-27 → 2026-09-01 A (-56d) | 0% → 100% |  |
| RHD4CZ8A011ST1303 | Installing for GRP Pipe Line 700 mm - (RD-A-1 /1)-Z8-A011-ST | 2026-10-29 → 2026-09-01 A (-58d) | 2026-10-31 → 2026-09-02 A (-59d) | 0% → 100% |  |
| RHD4CZ8A011ST1503 | Backfilling and warning tape works for GRP Pipe Line 700 mm - (RD-A-1 /1)-Z8-A011-ST | 2026-11-04 → 2026-09-02 A (-63d) | 2026-11-05 → 2026-09-03 A (-63d) | 0% → 100% |  |
| RHD4CZ8A011ST1403 | Primary Test for GRP Pipe Line 700 mm - (RD-A-1 /1)-Z8-A011-ST | 2026-11-01 → 2027-04-13 (+163d) | 2026-11-02 → 2027-04-14 (+163d) |  |  |
| 7710 | **RHD4-02-002-A011-(ST)-GRP Pipes - 600 mm diameter** | 2026-10-26 → 2026-08-29 (-58d) | 2026-11-07 → 2027-04-14 (+158d) |  |  |
| RHD4CZ8A011ST1102 | Excavation works for GRP Pipe Line 600 mm - (RD-A-1 /1)-Z8-A011-ST | 2026-10-26 → 2026-08-29 A (-58d) | 2026-10-27 → 2026-08-30 A (-58d) | 0% → 100% |  |
| RHD4CZ8A011ST1202 | Bedding works for GRP Pipe Line 600 mm - (RD-A-1 /1)-Z8-A011-ST | 2026-10-28 → 2026-08-31 A (-58d) | 2026-10-29 → 2026-09-01 A (-58d) | 0% → 100% |  |
| RHD4CZ8A011ST1302 | Installing for GRP Pipe Line 600 mm - (RD-A-1 /1)-Z8-A011-ST | 2026-11-01 → 2026-09-01 A (-61d) | 2026-11-02 → 2026-09-02 A (-61d) | 0% → 100% |  |
| RHD4CZ8A011ST1502 | Backfilling and warning tape works for GRP Pipe Line 600 mm - (RD-A-1 /1)-Z8-A011-ST | 2026-11-05 → 2026-09-02 A (-64d) | 2026-11-07 → 2026-09-04 A (-64d) | 0% → 100% |  |
| RHD4CZ8A011ST1402 | Primary Test for GRP Pipe Line 600 mm - (RD-A-1 /1)-Z8-A011-ST | 2026-11-03 → 2027-04-13 (+161d) | 2026-11-04 → 2027-04-14 (+161d) |  |  |
| 7709 | **RHD4-02-002-A011-(ST)-GRP Pipes - 500 mm diameter** | 2026-10-28 → 2026-08-29 (-60d) | 2026-11-09 → 2027-04-14 (+156d) |  |  |
| RHD4CZ8A011ST1101 | Excavation works for GRP Pipe Line 500 mm - (RD-A-1 /1)-Z8-A011-ST | 2026-10-28 → 2026-08-29 A (-60d) | 2026-10-29 → 2026-08-31 A (-59d) | 0% → 100% | resources Skilled labor [6.43 h]; Unskilled Labor [6.43 h]; Equipment Opreator [7.73 h]; Excavator-Poclain [6.43 h]; Dump Truck [1.31 h]; GRP (500mm Diameter) - ST - Depth less than 1.5 m [13.23 m]; GRP (500mm Diameter) - ST - Depth: 1.51m - 2.5m → Skilled labor [6.4 h]; Unskilled Labor [6.4 h]; Equipment Opreator [7.73 h]; Excavator-Poclain [6.4 h]; Dump Truck [1.31 h]; GRP (500mm Diameter) - ST - Depth less than 1.5 m [13.23 m]; GRP (500mm Diameter) - ST - Depth: 1.51m - 2.5m |
| RHD4CZ8A011ST1201 | Bedding works for GRP Pipe Line 500 mm - (RD-A-1 /1)-Z8-A011-ST | 2026-10-31 → 2026-09-01 A (-60d) | 2026-11-01 → 2026-09-02 A (-60d) | 0% → 100% |  |
| RHD4CZ8A011ST1301 | Installing for GRP Pipe Line 500 mm - (RD-A-1 /1)-Z8-A011-ST | 2026-11-03 → 2026-09-02 A (-62d) | 2026-11-04 → 2026-09-03 A (-62d) | 0% → 100% |  |
| RHD4CZ8A011ST1501 | Backfilling and warning tape works for GRP Pipe Line 500 mm - (RD-A-1 /1)-Z8-A011-ST | 2026-11-08 → 2026-09-06 A (-63d) | 2026-11-09 → 2026-09-07 A (-63d) | 0% → 100% | resources Skilled labor [7.19 h]; Unskilled Labor [14.38 h]; Equipment Opreator [14.38 h]; Excavator-Poclain [7.19 h]; Dump Truck [7.19 h]; GRP (500mm Diameter) - ST - Depth less than 1.5 m [26.45 m]; GRP (500mm Diameter) - ST - Depth: 1.51m - 2.5m → Skilled labor [7.2 h]; Unskilled Labor [14.4 h]; Equipment Opreator [14.4 h]; Excavator-Poclain [7.2 h]; Dump Truck [7.2 h]; GRP (500mm Diameter) - ST - Depth less than 1.5 m [26.45 m]; GRP (500mm Diameter) - ST - Depth: 1.51m - 2.5m |
| RHD4CZ8A011ST1401 | Primary Test for GRP Pipe Line 500 mm - (RD-A-1 /1)-Z8-A011-ST | 2026-11-05 → 2027-04-13 (+159d) | 2026-11-07 → 2027-04-14 (+158d) |  |  |
| 7708 | **RHD4-02-002-A011-(ST)-GRP Pipes - 400 mm diameter** | 2026-11-10 → 2027-04-15 (+156d) | 2026-11-21 → 2027-04-26 (+156d) |  |  |
| RHD4CZ8A011ST1100 | Excavation works for GRP Pipe Line 400 mm - (RD-A-1 /1)-Z8-A011-ST | 2026-11-10 → 2027-04-15 (+156d) | 2026-11-11 → 2027-04-17 (+157d) |  |  |
| RHD4CZ8A011ST1200 | Bedding works for GRP Pipe Line 400 mm - (RD-A-1 /1)-Z8-A011-ST | 2026-11-12 → 2027-04-18 (+157d) | 2026-11-14 → 2027-04-19 (+156d) |  |  |
| RHD4CZ8A011ST1300 | Installing for GRP Pipe Line 400 mm - (RD-A-1 /1)-Z8-A011-ST | 2026-11-15 → 2027-04-20 (+156d) | 2026-11-16 → 2027-04-21 (+156d) |  |  |
| RHD4CZ8A011ST1400 | Primary Test for GRP Pipe Line 400 mm - (RD-A-1 /1)-Z8-A011-ST | 2026-11-17 → 2027-04-22 (+156d) | 2026-11-18 → 2027-04-24 (+157d) |  |  |
| RHD4CZ8A011ST1500 | Backfilling and warning tape works for GRP Pipe Line 400 mm - (RD-A-1 /1)-Z8-A011-ST | 2026-11-19 → 2027-04-25 (+157d) | 2026-11-21 → 2027-04-26 (+156d) |  |  |
| 7722 | **RHD4-02-002-A011-(ST)-UPVC Pipes - 300 mm diameter** | 2026-11-12 → 2026-08-23 (-81d) | 2026-12-14 → 2027-06-05 (+173d) |  |  |
| RHD4CZ8A011ST2100 | Excavation works for UPVC Pipe Line 300 mm - (RD-A-1 /1)-Z8-A011-ST | 2026-11-12 → 2026-08-23 A (-81d) | 2026-11-18 → 2027-04-24 (+157d) | 0% → 82% |  |
| RHD4CZ8A011ST2200 | Bedding works for UPVC Pipe Line 300 mm - (RD-A-1 /1)-Z8-A011-ST | 2026-11-19 → 2026-08-25 A (-86d) | 2026-11-24 → 2027-04-29 (+156d) | 0% → 82% |  |
| RHD4CZ8A011ST2300 | Installing for UPVC Pipe Line 300 mm - (RD-A-1 /1)-Z8-A011-ST | 2026-11-25 → 2026-08-29 A (-88d) | 2026-12-01 → 2027-05-06 (+156d) | 0% → 82% |  |
| RHD4CZ8A011ST2500 | Backfilling and warning tape works for UPVC Pipe Line 300 mm - (RD-A-1 /1)-Z8-A011-ST | 2026-12-07 → 2026-09-19 A (-79d) | 2026-12-14 → 2027-06-05 (+173d) | 0% → 63% |  |
| RHD4CZ8A011ST2400 | Primary Test for UPVC Pipe Line 300 mm - (RD-A-1 /1)-Z8-A011-ST | 2026-12-02 → 2027-05-08 (+157d) | 2026-12-06 → 2027-05-11 (+156d) |  |  |

| ID | Task | Start | Finish | Duration | Complete | Other |
| --- | --- | --- | --- | --- | --- | --- |
| 7730 | **RHD4-02-002-A011-(ST)-Concrete Encasement** | 2026-11-30 → 2027-05-26 (+177d) | 2026-12-01 → 2027-05-27 (+177d) |  |  |  |
| RHD4CZ8A011ST6100 | Pipe Encasement for Storm Pipelines - (RD-A-1 /1)-Z8-A011-ST | 2026-11-30 → 2027-05-26 (+177d) | 2026-12-01 → 2027-05-27 (+177d) |  |  | resources Skilled labor [16.55 h]; Unskilled Labor [16.55 h]; Equipment Opreator [18.19 h]; Concrete Mixer Truck [1.63 h]; Dump Truck [16.55 h]; Pipe Encasement - ST [303.67 m3] → Skilled labor [16.55 h]; Unskilled Labor [16.55 h]; Equipment Opreator [18.19 h]; Concrete Mixer Truck [1.6 h]; Dump Truck [16.55 h]; Pipe Encasement - ST [303.67 m3] |
| 7731 | **RHD4-02-002-Z8-A011-Catch Basin - ST** | 2026-11-12 → 2026-08-29 (-75d) | 2027-03-23 → 2027-08-22 (+152d) |  |  |  |
| 7732 | **RHD4-02-002-A011-(ST)-Single Catch Basin Works** | 2026-11-12 → 2026-08-29 (-75d) | 2027-03-23 → 2027-08-22 (+152d) |  |  |  |
| RHD4CZ8A011ST7100 | Excavation works for Single Catch Basin - (RD-A-1 /1)-Z8-A011-ST | 2026-11-12 → 2026-08-29 A (-75d) | 2026-11-18 → 2027-04-20 (+153d) |  | 0% → 91% | resources Skilled labor [58.81 h]; Unskilled Labor [117.62 h]; Equipment Opreator [88.21 h]; Excavator-Poclain [58.81 h]; Dump Truck [29.4 h]; Single Catch basin - ST [13.5 nr] → Skilled labor [58.81 h]; Unskilled Labor [117.6 h]; Equipment Opreator [88.21 h]; Excavator-Poclain [58.81 h]; Dump Truck [29.4 h]; Single Catch basin - ST [13.5 nr] |
| RHD4CZ8A011ST7200 | PC Blinding, Installation and Pipe connection for Single Catch Basin - (RD-A-1 /1)-Z8-A011-ST | 2026-11-19 → 2026-09-05 A (-75d) | 2026-11-25 → 2027-04-24 (+150d) |  | 0% → 91% | resources Skilled labor [58.81 h]; Unskilled Labor [117.62 h]; Plumber [29.4 h]; Equipment Opreator [11.76 h]; Boom Truck [11.76 h]; Single Catch basin - ST [10.8 nr] → Skilled labor [58.81 h]; Unskilled Labor [117.6 h]; Plumber [29.4 h]; Equipment Opreator [11.76 h]; Boom Truck [11.76 h]; Single Catch basin - ST [10.8 nr] |
| RHD4CZ8A011ST7300 | Rings & C.Slab & Final Backfill for Single Catch Basin - (RD-A-1 /1)-Z8-A011-ST | 2026-11-26 → 2026-09-07 A (-80d) | 2026-12-03 → 2027-04-27 (+145d) |  | 0% → 91% |  |
| RHD4CZ8A011ST7400 | Steel Cover for Single Catch Basin - (RD-A-1 /1)-Z8-A011-ST | 2027-03-01 → 2027-08-03 (+155d) | 2027-03-07 → 2027-08-09 (+155d) |  |  |  |
| RHD4CZ8A011ST7500 | Finishing and Insulation works for Single Catch Basin - (RD-A-1 /1)-Z8-A011-ST | 2027-03-08 → 2027-08-10 (+155d) | 2027-03-23 → 2027-08-22 (+152d) |  |  | resources Skilled labor [117.62 h]; Unskilled Labor [235.23 h]; Equipment Opreator [23.52 h]; Boom Truck [23.52 h]; Single Catch basin - ST [8.1 nr] → Skilled labor [117.6 h]; Unskilled Labor [235.2 h]; Equipment Opreator [23.52 h]; Boom Truck [23.52 h]; Single Catch basin - ST [8.1 nr] |
| 6409 | **RHD4-02-002-A011-(ST)-Double Catch Basin Works** | 2026-11-19 → 2027-04-21 (+153d) | 2026-11-30 → 2027-05-02 (+153d) |  |  |  |
| RHD4CZ8A011ST8100 | Excavation works for Double Catch Basin - (RD-A-1 /1)-Z8-A011-ST | 2026-11-19 → 2027-04-21 (+153d) | 2026-11-21 → 2027-04-22 (+152d) |  |  |  |
| RHD4CZ8A011ST8200 | PC Blinding, Installation and Pipe connection for Double Catch Basin - (RD-A-1 /1)-Z8-A011-ST | 2026-11-22 → 2027-04-24 (+153d) | 2026-11-23 → 2027-04-25 (+153d) |  |  |  |
| RHD4CZ8A011ST8300 | Rings & C.Slab & Final Backfillfor Double Catch Basin - (RD-A-1 /1)-Z8-A011-ST | 2026-11-24 → 2027-04-26 (+153d) | 2026-11-25 → 2027-04-27 (+153d) |  |  |  |
| RHD4CZ8A011ST8400 | Steel Cover for Double Catch Basin - (RD-A-1 /1)-Z8-A011-ST | 2026-11-26 → 2027-04-28 (+153d) | 2026-11-28 → 2027-04-29 (+152d) |  |  |  |
| RHD4CZ8A011ST8500 | Finishing and Insulation works for Double Catch Basin - (RD-A-1 /1)-Z8-A011-ST | 2026-11-29 → 2027-05-01 (+153d) | 2026-11-30 → 2027-05-02 (+153d) |  |  |  |
| 7378 | **RHD4-02-002-Z8-A011-Sewage Network - SW** | 2027-01-05 → 2026-08-11 (-147d) | 2027-03-02 → 2027-07-26 (+146d) |  |  |  |
| 1895 | **RHD4-02-002-A011-(SW)-GRP Pipes - 500 mm diameter** | 2027-01-05 → 2026-08-15 (-143d) | 2027-01-16 → 2027-06-09 (+144d) |  |  |  |
| RHD4CZ8A011SW1102 | Excavation works for GRP Pipe Line 500 mm - (RD-A-1 /1)-Z8-A011-SW | 2027-01-05 → 2026-08-15 A (-143d) | 2027-01-06 → 2026-08-17 A (-142d) |  | 0% → 100% |  |
| RHD4CZ8A011SW1202 | Bedding works for GRP Pipe Line 500 mm - (RD-A-1 /1)-Z8-A011-SW | 2027-01-07 → 2026-08-16 A (-144d) | 2027-01-09 → 2026-08-18 A (-144d) |  | 0% → 100% |  |
| RHD4CZ8A011SW1302 | Installing for GRP Pipe Line 500 mm - (RD-A-1 /1)-Z8-A011-SW | 2027-01-10 → 2026-09-06 A (-126d) | 2027-01-11 → 2026-09-07 A (-126d) |  | 0% → 100% |  |
| RHD4CZ8A011SW1402 | Primary Test for GRP Pipe Line 500 mm - (RD-A-1 /1)-Z8-A011-SW | 2027-01-12 → 2027-06-06 (+145d) | 2027-01-13 → 2027-06-07 (+145d) |  |  |  |
| RHD4CZ8A011SW1502 | Backfilling and warning tape works for GRP Pipe Line 500 mm - (RD-A-1 /1)-Z8-A011-SW | 2027-01-14 → 2027-06-08 (+145d) | 2027-01-16 → 2027-06-09 (+144d) |  |  |  |
| 4542 | **RHD4-02-002-A011-(SW)-GRP Pipes - 400 mm diameter** | 2027-01-07 → 2026-08-15 (-145d) | 2027-02-04 → 2027-07-04 (+150d) |  |  |  |
| RHD4CZ8A011SW1101 | Excavation works for GRP Pipe Line 400 mm - (RD-A-1 /1)-Z8-A011-SW | 2027-01-07 → 2026-08-15 A (-145d) | 2027-01-12 → 2027-06-10 (+149d) |  | 0% → 49% | resources Skilled labor [44.11 h]; Unskilled Labor [44.11 h]; Equipment Opreator [52.93 h]; Excavator-Poclain [44.11 h]; Dump Truck [8.82 h]; GRP (400mm Diameter) - SW - Depth: 2.51m - 3.5m; GRP (400mm Diameter) - SW - Depth: 3.51m - 4.5m [13.19 m]; GRP (400mm Diameter) - SW - Depth: more than 4.5m [64.92 m] → Skilled labor [44.11 h]; Unskilled Labor [44.11 h]; Equipment Opreator [52.93 h]; Excavator-Poclain [44.11 h]; Dump Truck [8.8 h]; GRP (400mm Diameter) - SW - Depth: 2.51m - 3.5m; GRP (400mm Diameter) - SW - Depth: 3.51m - 4.5m [13.19 m]; GRP (400mm Diameter) - SW - Depth: more than 4.5m [64.92 m] |
| RHD4CZ8A011SW1201 | Bedding works for GRP Pipe Line 400 mm - (RD-A-1 /1)-Z8-A011-SW | 2027-01-13 → 2026-09-06 A (-129d) | 2027-01-18 → 2027-06-16 (+149d) |  | 0% → 49% |  |
| RHD4CZ8A011SW1301 | Installing for GRP Pipe Line 400 mm - (RD-A-1 /1)-Z8-A011-SW | 2027-01-19 → 2026-09-08 A (-133d) | 2027-01-24 → 2027-06-22 (+149d) |  | 0% → 33% |  |
| RHD4CZ8A011SW1501 | Backfilling and warning tape works for GRP Pipe Line 400 mm - (RD-A-1 /1)-Z8-A011-SW | 2027-01-31 → 2026-09-20 A (-133d) | 2027-02-04 → 2027-07-04 (+150d) |  | 0% → 49% |  |
| RHD4CZ8A011SW1401 | Primary Test for GRP Pipe Line 400 mm - (RD-A-1 /1)-Z8-A011-SW | 2027-01-25 → 2027-06-23 (+149d) | 2027-01-30 → 2027-06-28 (+149d) |  |  |  |
| 957 | **RHD4-02-002-A011-(SW)-MH Works - 1200 mm diameter with Back drop** | 2027-01-10 → 2026-09-05 (-127d) | 2027-01-24 → 2027-06-14 (+141d) |  |  |  |
| RHD4CZ8A011SW3101 | Excavation and PC Blinding works for MH 1200 mm - (RD-A-1 /1)-Z8-A011-SW | 2027-01-10 → 2026-09-05 A (-127d) | 2027-01-11 → 2026-09-07 A (-126d) |  | 0% → 100% |  |
| RHD4CZ8A011SW3201 | Installation of Base for MH 1200 mm - (RD-A-1 /1)-Z8-A011-SW | 2027-01-12 → 2026-09-07 A (-127d) | 2027-01-14 → 2026-09-08 A (-128d) |  | 0% → 100% | resources Skilled labor [27.23 h]; Unskilled Labor [27.23 h]; Equipment Opreator [10.89 h]; Boom Truck [5.45 h]; Concrete Mixer Truck [5.45 h]; MH (1200mm Diameter) - SW - depth 2.51- 3.5 m with back drop [0.25 nr]; MH (1200mm Diameter) - SW - depth 4.51-5.5 m with back drop [0.25 nr]; MH (1200mm Diameter) - SW - depth more than 6.0 m with back drop [0.25 nr] → Skilled labor [27.2 h]; Unskilled Labor [27.2 h]; Equipment Opreator [10.89 h]; Boom Truck [5.45 h]; Concrete Mixer Truck [5.45 h]; MH (1200mm Diameter) - SW - depth 2.51- 3.5 m with back drop [0.25 nr]; MH (1200mm Diameter) - SW - depth 4.51-5.5 m with back drop [0.25 nr]; MH (1200mm Diameter) - SW - depth more than 6.0 m with back drop [0.25 nr] |
| RHD4CZ8A011SW3301 | MH Ring and C.Slab works and Backfilling works for MH 1200 mm - (RD-A-1 /1)-Z8-A011-SW | 2027-01-16 → 2026-09-08 A (-130d) | 2027-01-18 → 2027-06-08 (+141d) |  | 0% → 50% | resources Skilled labor [27.23 h]; Unskilled Labor [27.23 h]; Equipment Opreator [19.06 h]; Boom Truck [10.89 h]; Concrete Mixer Truck [8.17 h]; MH (1200mm Diameter) - SW - depth 2.51- 3.5 m with back drop [0.35 nr]; MH (1200mm Diameter) - SW - depth 4.51-5.5 m with back drop [0.35 nr]; MH (1200mm Diameter) - SW - depth more than 6.0 m with back drop [0.35 nr] → Skilled labor [27.2 h]; Unskilled Labor [27.2 h]; Equipment Opreator [19.06 h]; Boom Truck [10.89 h]; Concrete Mixer Truck [8.17 h]; MH (1200mm Diameter) - SW - depth 2.51- 3.5 m with back drop [0.35 nr]; MH (1200mm Diameter) - SW - depth 4.51-5.5 m with back drop [0.35 nr]; MH (1200mm Diameter) - SW - depth more than 6.0 m with back drop [0.35 nr] |
| RHD4CZ8A011SW3401 | Steel Cover for MH 1200 mm - (RD-A-1 /1)-Z8-A011-SW | 2027-01-19 → 2027-06-09 (+141d) | 2027-01-20 → 2027-06-10 (+141d) |  |  |  |
| RHD4CZ8A011SW3501 | Finishing, Benching, Testing works for MH 1200 mm - (RD-A-1 /1)-Z8-A011-SW | 2027-01-21 → 2027-06-12 (+142d) | 2027-01-24 → 2027-06-14 (+141d) |  |  | resources Skilled labor [27.23 h]; Unskilled Labor [54.45 h]; Plumber [27.23 h]; Equipment Opreator [5.45 h]; Water Truck [5.45 h]; MH (1200mm Diameter) - SW - depth 2.51- 3.5 m with back drop [0.1 nr]; MH (1200mm Diameter) - SW - depth 4.51-5.5 m with back drop [0.1 nr]; MH (1200mm Diameter) - SW - depth more than 6.0 m with back drop [0.1 nr] → Skilled labor [27.2 h]; Unskilled Labor [54.45 h]; Plumber [27.2 h]; Equipment Opreator [5.45 h]; Water Truck [5.45 h]; MH (1200mm Diameter) - SW - depth 2.51- 3.5 m with back drop [0.1 nr]; MH (1200mm Diameter) - SW - depth 4.51-5.5 m with back drop [0.1 nr]; MH (1200mm Diameter) - SW - depth more than 6.0 m with back drop [0.1 nr] |
| 3794 | **RHD4-02-002-A011-(SW)-MH Works - 1200 mm diameter** | 2027-01-07 → 2026-09-06 (-123d) | 2027-03-02 → 2027-07-26 (+146d) |  |  |  |
| RHD4CZ8A011SW3100 | Excavation and PC Blinding works for MH 1200 mm - (RD-A-1 /1)-Z8-A011-SW | 2027-01-07 → 2026-09-06 A (-123d) | 2027-01-09 → 2026-09-07 A (-124d) |  | 0% → 100% |  |
| RHD4CZ8A011SW3200 | Installation of Base for MH 1200 mm - (RD-A-1 /1)-Z8-A011-SW | 2027-01-10 → 2026-09-07 A (-125d) | 2027-01-24 → 2027-06-20 (+147d) |  | 0% → 50% | resources Skilled labor [136.13 h]; Unskilled Labor [136.13 h]; Equipment Opreator [54.45 h]; Boom Truck [27.23 h]; Concrete Mixer Truck [27.23 h]; MH (1200mm Diameter) - SW - depth 0 - 1.5m [0.5 nr]; MH (1200mm Diameter) - SW - depth 1.51 - 2.5m [0.75 nr]; MH (1200mm Diameter) - SW - depth 2.51 - 3.5m [0.25 nr]; MH (1200mm Diameter) - SW - depth 3.51 -4.5m [0.75 nr]; MH (1200mm Diameter) - SW - depth 4.51 -5.5m [0.5 nr]; MH (1200mm Diameter) - SW - depth more than 6.0 m [1 nr] → Skilled labor [136.13 h]; Unskilled Labor [136.13 h]; Equipment Opreator [54.45 h]; Boom Truck [27.2 h]; Concrete Mixer Truck [27.2 h]; MH (1200mm Diameter) - SW - depth 0 - 1.5m [0.5 nr]; MH (1200mm Diameter) - SW - depth 1.51 - 2.5m [0.75 nr]; MH (1200mm Diameter) - SW - depth 2.51 - 3.5m [0.25 nr]; MH (1200mm Diameter) - SW - depth 3.51 -4.5m [0.75 nr]; MH (1200mm Diameter) - SW - depth 4.51 -5.5m [0.5 nr]; MH (1200mm Diameter) - SW - depth more than 6.0 m [1 nr] |
| RHD4CZ8A011SW3300 | MH Ring and C.Slab works and Backfilling works for MH 1200 mm - (RD-A-1 /1)-Z8-A011-SW | 2027-01-25 → 2027-06-21 (+147d) | 2027-02-08 → 2027-07-05 (+147d) |  |  | resources Skilled labor [136.13 h]; Unskilled Labor [136.13 h]; Equipment Opreator [95.29 h]; Boom Truck [54.45 h]; Concrete Mixer Truck [40.84 h]; MH (1200mm Diameter) - SW - depth 0 - 1.5m [0.7 nr]; MH (1200mm Diameter) - SW - depth 1.51 - 2.5m [1.05 nr]; MH (1200mm Diameter) - SW - depth 2.51 - 3.5m [0.35 nr]; MH (1200mm Diameter) - SW - depth 3.51 -4.5m [1.05 nr]; MH (1200mm Diameter) - SW - depth 4.51 -5.5m [0.7 nr]; MH (1200mm Diameter) - SW - depth more than 6.0 m [1.4 nr] → Skilled labor [136.13 h]; Unskilled Labor [136.13 h]; Equipment Opreator [95.29 h]; Boom Truck [54.45 h]; Concrete Mixer Truck [40.8 h]; MH (1200mm Diameter) - SW - depth 0 - 1.5m [0.7 nr]; MH (1200mm Diameter) - SW - depth 1.51 - 2.5m [1.05 nr]; MH (1200mm Diameter) - SW - depth 2.51 - 3.5m [0.35 nr]; MH (1200mm Diameter) - SW - depth 3.51 -4.5m [1.05 nr]; MH (1200mm Diameter) - SW - depth 4.51 -5.5m [0.7 nr]; MH (1200mm Diameter) - SW - depth more than 6.0 m [1.4 nr] |
| RHD4CZ8A011SW3400 | Steel Cover for MH 1200 mm - (RD-A-1 /1)-Z8-A011-SW | 2027-02-09 → 2027-07-06 (+147d) | 2027-02-14 → 2027-07-11 (+147d) |  |  |  |
| RHD4CZ8A011SW3500 | Finishing, Benching, Testing works for MH 1200 mm - (RD-A-1 /1)-Z8-A011-SW | 2027-02-15 → 2027-07-12 (+147d) | 2027-03-02 → 2027-07-26 (+146d) |  |  | resources Skilled labor [136.13 h]; Unskilled Labor [272.26 h]; Plumber [136.13 h]; Equipment Opreator [27.23 h]; Water Truck [27.23 h]; MH (1200mm Diameter) - SW - depth 0 - 1.5m [0.2 nr]; MH (1200mm Diameter) - SW - depth 1.51 - 2.5m [0.3 nr]; MH (1200mm Diameter) - SW - depth 2.51 - 3.5m [0.1 nr]; MH (1200mm Diameter) - SW - depth 3.51 -4.5m [0.3 nr]; MH (1200mm Diameter) - SW - depth 4.51 -5.5m [0.2 nr]; MH (1200mm Diameter) - SW - depth more than 6.0 m [0.4 nr] → Skilled labor [136.13 h]; Unskilled Labor [272.26 h]; Plumber [136.13 h]; Equipment Opreator [27.2 h]; Water Truck [27.2 h]; MH (1200mm Diameter) - SW - depth 0 - 1.5m [0.2 nr]; MH (1200mm Diameter) - SW - depth 1.51 - 2.5m [0.3 nr]; MH (1200mm Diameter) - SW - depth 2.51 - 3.5m [0.1 nr]; MH (1200mm Diameter) - SW - depth 3.51 -4.5m [0.3 nr]; MH (1200mm Diameter) - SW - depth 4.51 -5.5m [0.2 nr]; MH (1200mm Diameter) - SW - depth more than 6.0 m [0.4 nr] |
| 3790 | **RHD4-02-002-A011-(SW)-UPVC Pipes - 200 mm diameter** | 2027-01-13 → 2026-08-11 (-155d) | 2027-02-02 → 2027-06-14 (+132d) |  |  |  |
| RHD4CZ8A011SW2100 | Excavation works for UPVC Pipe Line 200 mm - (RD-A-1 /1)-Z8-A011-SW | 2027-01-13 → 2026-08-11 A (-155d) | 2027-01-17 → 2026-08-15 A (-155d) |  | 0% → 100% | resources Skilled labor [33.32 h]; Unskilled Labor [33.32 h]; Equipment Opreator [39.97 h]; Excavator-Poclain [33.32 h]; Dump Truck [6.64 h]; UPVC (200mm Diameter) - SW - Depth: less than 1.5m [26.08 m]; UPVC (200mm Diameter) - SW - Depth: 1.51m - 2.5m [29.56 m]; UPVC (200mm Diameter) - SW - Depth: 2.51m - 3.5m [19.39 m]; UPVC (200mm Diameter) - SW - Depth: 3.51m - 4.5m → Skilled labor [33.32 h]; Unskilled Labor [33.32 h]; Equipment Opreator [40 h]; Excavator-Poclain [33.32 h]; Dump Truck [6.64 h]; UPVC (200mm Diameter) - SW - Depth: less than 1.5m [26.08 m]; UPVC (200mm Diameter) - SW - Depth: 1.51m - 2.5m [29.56 m]; UPVC (200mm Diameter) - SW - Depth: 2.51m - 3.5m [19.39 m]; UPVC (200mm Diameter) - SW - Depth: 3.51m - 4.5m |
| RHD4CZ8A011SW2200 | Bedding works for UPVC Pipe Line 200 mm - (RD-A-1 /1)-Z8-A011-SW | 2027-01-18 → 2026-08-13 A (-158d) | 2027-01-20 → 2026-08-16 A (-157d) |  | 0% → 100% | resources Skilled labor [32.02 h]; Unskilled Labor [64.14 h]; Equipment Opreator [64.14 h]; Excavator-Poclain [32.02 h]; Dump Truck [32.02 h]; UPVC (200mm Diameter) - SW - Depth: less than 1.5m [13.04 m]; UPVC (200mm Diameter) - SW - Depth: 1.51m - 2.5m [9.85 m]; UPVC (200mm Diameter) - SW - Depth: 2.51m - 3.5m [6.46 m]; UPVC (200mm Diameter) - SW - Depth: 3.51m - 4.5m → Skilled labor [32 h]; Unskilled Labor [64.14 h]; Equipment Opreator [64.14 h]; Excavator-Poclain [32 h]; Dump Truck [32 h]; UPVC (200mm Diameter) - SW - Depth: less than 1.5m [13.04 m]; UPVC (200mm Diameter) - SW - Depth: 1.51m - 2.5m [9.85 m]; UPVC (200mm Diameter) - SW - Depth: 2.51m - 3.5m [6.46 m]; UPVC (200mm Diameter) - SW - Depth: 3.51m - 4.5m |
| RHD4CZ8A011SW2300 | Installing for UPVC Pipe Line 200 mm - (RD-A-1 /1)-Z8-A011-SW | 2027-01-21 → 2026-08-15 A (-159d) | 2027-01-25 → 2026-09-09 A (-138d) |  | 0% → 100% |  |
| RHD4CZ8A011SW2500 | Backfilling and warning tape works for UPVC Pipe Line 200 mm - (RD-A-1 /1)-Z8-A011-SW | 2027-01-30 → 2026-09-10 A (-142d) | 2027-02-02 → 2026-10-27 A (-98d) |  | 0% → 100% |  |
| RHD4CZ8A011SW2400 | Primary Test for UPVC Pipe Line 200 mm - (RD-A-1 /1)-Z8-A011-SW | 2027-01-26 → 2027-06-12 (+137d) | 2027-01-28 → 2027-06-14 (+137d) |  |  |  |
| 7793 | **RHD4-02-002-Z8-A011-Potable Network - PT** | 2027-01-18 → 2027-06-12 (+145d) | 2027-03-07 → 2027-08-09 (+155d) |  |  |  |
| 7797 | **RHD4-02-002-A011-(PT)-HDPE Pipes - 400 mm diameter** | 2027-01-18 → 2027-06-12 (+145d) | 2027-02-15 → 2027-07-21 (+156d) |  |  |  |
| RHD4CZ8A011PT1103 | Excavation works for HDPE Pipline 400 mm - (RD-A-1 /1)-Z8-A011-PT | 2027-01-18 → 2027-06-12 (+145d) | 2027-01-25 → 2027-06-19 (+145d) |  |  |  |
| RHD4CZ8A011PT1203 | Bedding works for HDPE Pipline 400 mm - (RD-A-1 /1)-Z8-A011-PT | 2027-01-26 → 2027-06-20 (+145d) | 2027-02-02 → 2027-06-27 (+145d) |  |  |  |
| RHD4CZ8A011PT1303 | Installing for HDPE Pipline 400 mm - (RD-A-1 /1)-Z8-A011-PT | 2027-02-03 → 2027-06-28 (+145d) | 2027-02-08 → 2027-07-07 (+149d) | 5d → 9d |  |  |
| RHD4CZ8A011PT1403 | Primary Test for HDPE Pipline 400 mm - (RD-A-1 /1)-Z8-A011-PT | 2027-02-09 → 2027-07-08 (+149d) | 2027-02-11 → 2027-07-14 (+153d) | 3d → 6d |  |  |
| RHD4CZ8A011PT1503 | Backfilling and warning tape works for HDPE Pipline 400 mm - (RD-A-1 /1)-Z8-A011-PT | 2027-02-13 → 2027-07-15 (+152d) | 2027-02-15 → 2027-07-21 (+156d) | 3d → 6d |  |  |
| 6102 | **RHD4-02-002-A011-(PT)-Air Valve Chambers** | 2027-02-18 → 2027-07-25 (+157d) | 2027-02-28 → 2027-08-02 (+155d) |  |  |  |
| RHD4CZ8A011PT2102 | Excavation and Bedding for Air Valve Chambers for Potable Water Network - (RD-A-1 /1)-Z8-A011-PT | 2027-02-18 → 2027-07-25 (+157d) | 2027-02-20 → 2027-07-26 (+156d) |  |  |  |
| RHD4CZ8A011PT2202 | PC works for Air Valve Chambers for Potable Water Network - (RD-A-1 /1)-Z8-A011-PT | 2027-02-21 → 2027-07-27 (+156d) | 2027-02-23 → 2027-07-28 (+155d) |  |  |  |
| RHD4CZ8A011PT2302 | Installation for Air Valve Chambers for Potable Water Network - (RD-A-1 /1)-Z8-A011-PT | 2027-02-24 → 2027-07-29 (+155d) | 2027-02-25 → 2027-07-31 (+156d) |  |  |  |
| RHD4CZ8A011PT2402 | Backfilling works for Air Valve Chambers for Potable Water Network - (RD-A-1 /1)-Z8-A011-PT | 2027-02-27 → 2027-08-01 (+155d) | 2027-02-28 → 2027-08-02 (+155d) |  |  |  |
| 6103 | **RHD4-02-002-A011-(PT)-Air Valves** | 2027-02-27 → 2027-08-01 (+155d) | 2027-03-04 → 2027-08-04 (+153d) |  |  |  |
| RHD4CZ8A011PT3103 | Installation for Air Valves for Potable Water Network - (RD-A-1 /1)-Z8-A011-PT | 2027-02-27 → 2027-08-01 (+155d) | 2027-02-28 → 2027-08-02 (+155d) |  |  |  |
| RHD4CZ8A011PT3203 | Stem and Service box for Air Valves for Potable Water Network - (RD-A-1 /1)-Z8-A011-PT | 2027-03-03 → 2027-08-03 (+153d) | 2027-03-04 → 2027-08-04 (+153d) |  |  |  |
| 7801 | **RHD4-02-002-A011-(PT)-Butterfly Valves** | 2027-02-21 → 2027-07-27 (+156d) | 2027-02-28 → 2027-08-02 (+155d) |  |  |  |
| RHD4CZ8A011PT3101 | Installation for Butterfly Valves for Potable Water Network - (RD-A-1 /1)-Z8-A011-PT | 2027-02-21 → 2027-07-27 (+156d) | 2027-02-23 → 2027-07-28 (+155d) |  |  |  |
| RHD4CZ8A011PT3201 | Stem and Service box for Butterfly Valves for Potable Water Network - (RD-A-1 /1)-Z8-A011-PT | 2027-02-27 → 2027-08-01 (+155d) | 2027-02-28 → 2027-08-02 (+155d) |  |  |  |
| 7802 | **RHD4-02-002-A011-(PT)-Wash out Valve Chambers** | 2027-02-16 → 2027-07-22 (+156d) | 2027-03-07 → 2027-08-09 (+155d) |  |  |  |
| RHD4CZ8A011PT2101 | Excavation and Bedding for Wash out Valve Chambers for Potable Water Network - (RD-A-1 /1)-Z8-A011-PT | 2027-02-16 → 2027-07-22 (+156d) | 2027-02-17 → 2027-07-24 (+157d) |  |  |  |
| RHD4CZ8A011PT2201 | PC works for Wash out Valve Chambers for Potable Water Network - (RD-A-1 /1)-Z8-A011-PT | 2027-03-01 → 2027-08-03 (+155d) | 2027-03-02 → 2027-08-04 (+155d) |  |  |  |
| RHD4CZ8A011PT2301 | Installation for Wash out Valve Chambers for Potable Water Network - (RD-A-1 /1)-Z8-A011-PT | 2027-03-03 → 2027-08-05 (+155d) | 2027-03-04 → 2027-08-07 (+156d) |  |  |  |
| RHD4CZ8A011PT2401 | Backfilling works for Wash out Valve Chambers for Potable Water Network - (RD-A-1 /1)-Z8-A011-PT | 2027-03-06 → 2027-08-08 (+155d) | 2027-03-07 → 2027-08-09 (+155d) |  |  |  |
| 7803 | **RHD4-02-002-A011-(PT)-Wash out Valves** | 2027-02-24 → 2027-07-29 (+155d) | 2027-02-28 → 2027-08-02 (+155d) |  |  |  |

| ID | Task | Start | Finish | Duration | Other |
| --- | --- | --- | --- | --- | --- |
| RHD4CZ8A011PT3102 | Installation for Wash out Valves for Potable Water Network - (RD-A-1 /1)-Z8-A011-PT | 2027-02-24 → 2027-07-29 (+155d) | 2027-02-25 → 2027-07-31 (+156d) |  |  |
| RHD4CZ8A011PT3202 | Stem and Service box for Wash out Valves for Potable Water Network - (RD-A-1 /1)-Z8-A011-PT | 2027-02-27 → 2027-08-01 (+155d) | 2027-02-28 → 2027-08-02 (+155d) |  |  |
| 7806 | **RHD4-02-002-A011-(PT)-Fire Hydrant** | 2027-02-16 → 2027-07-22 (+156d) | 2027-03-06 → 2027-08-08 (+155d) |  |  |
| RHD4CZ8A011PT4100 | Excavation and Bedding and Pipe Installation for Fire Hydrant - (RD-A-1 /1)-Z8-A011-PT | 2027-02-16 → 2027-07-22 (+156d) | 2027-02-20 → 2027-07-26 (+156d) |  |  |
| RHD4CZ8A011PT4200 | Valve Installation for Fire Hydrant - (RD-A-1 /1)-Z8-A011-PT | 2027-02-21 → 2027-07-27 (+156d) | 2027-02-24 → 2027-07-29 (+155d) |  |  |
| RHD4CZ8A011PT4300 | Stem for Fire Hydrant - (RD-A-1 /1)-Z8-A011-PT | 2027-02-25 → 2027-07-31 (+156d) | 2027-02-28 → 2027-08-02 (+155d) |  |  |
| RHD4CZ8A011PT4400 | Fire Installation for Fire Hydrant - (RD-A-1 /1)-Z8-A011-PT | 2027-03-01 → 2027-08-03 (+155d) | 2027-03-03 → 2027-08-05 (+155d) |  |  |
| RHD4CZ8A011PT4500 | Protection Barriers for Fire Hydrant - (RD-A-1 /1)-Z8-A011-PT | 2027-03-04 → 2027-08-07 (+156d) | 2027-03-06 → 2027-08-08 (+155d) |  |  |
| 7800 | **RHD4-02-002-A011-(PT)-Butterfly Valve Chamber** | 2027-02-16 → 2027-07-22 (+156d) | 2027-02-25 → 2027-07-31 (+156d) |  |  |
| RHD4CZ8A011PT2100 | Excavation and Bedding for Butterfly Valve Chamber for Potable Water Network - (RD-A-1 /1)-Z8-A011-PT | 2027-02-16 → 2027-07-22 (+156d) | 2027-02-17 → 2027-07-24 (+157d) |  | resources Skilled labor [16.34 h]; Unskilled Labor [16.34 h]; Equipment Opreator [3.27 h]; Excavator-Poclain [1.63 h]; Dump Truck [1.63 h]; Valve chambers - PT [0.75 nr] → Skilled labor [16.34 h]; Unskilled Labor [16.34 h]; Equipment Opreator [3.27 h]; Excavator-Poclain [1.6 h]; Dump Truck [1.6 h]; Valve chambers - PT [0.75 nr] |
| RHD4CZ8A011PT2200 | PC works for Butterfly Valve Chamber for Potable Water Network - (RD-A-1 /1)-Z8-A011-PT | 2027-02-18 → 2027-07-25 (+157d) | 2027-02-20 → 2027-07-26 (+156d) |  | resources Skilled labor [16.34 h]; Unskilled Labor [32.67 h]; Equipment Opreator [1.63 h]; Concrete Pump [1.63 h]; Valve chambers - PT [0.3 nr] → Skilled labor [16.34 h]; Unskilled Labor [32.67 h]; Equipment Opreator [1.6 h]; Concrete Pump [1.6 h]; Valve chambers - PT [0.3 nr] |
| RHD4CZ8A011PT2300 | Installation for Butterfly Valve Chamber for Potable Water Network - (RD-A-1 /1)-Z8-A011-PT | 2027-02-21 → 2027-07-27 (+156d) | 2027-02-23 → 2027-07-28 (+155d) |  |  |
| RHD4CZ8A011PT2400 | Backfilling works for Butterfly Valve Chamber for Potable Water Network - (RD-A-1 /1)-Z8-A011-PT | 2027-02-24 → 2027-07-29 (+155d) | 2027-02-25 → 2027-07-31 (+156d) |  | resources Skilled labor [16.34 h]; Unskilled Labor [32.67 h]; Equipment Opreator [3.27 h]; Water Truck [1.63 h]; Dump Truck [1.63 h]; Valve chambers - PT [0.3 nr] → Skilled labor [16.34 h]; Unskilled Labor [32.67 h]; Equipment Opreator [3.27 h]; Water Truck [1.6 h]; Dump Truck [1.6 h]; Valve chambers - PT [0.3 nr] |
| 1755 | **RHD4-02-002-Z8-A011-Irrigation Network - IRR** | 2027-01-26 → 2027-06-20 (+145d) | 2027-03-08 → 2027-07-29 (+143d) |  |  |
| 6107 | **RHD4-02-002-A011-(IRR)-HDPE Pipes - 160 mm diameter** | 2027-01-26 → 2027-06-20 (+145d) | 2027-02-06 → 2027-06-30 (+144d) |  |  |
| RHD4CZ8A011IRR1100 | Excavation works for HDPE Pipline 160 mm - (RD-A-1 /1)-Z8-A011-IRR | 2027-01-26 → 2027-06-20 (+145d) | 2027-01-27 → 2027-06-21 (+145d) |  |  |
| RHD4CZ8A011IRR1200 | Bedding works for HDPE Pipline 160 mm - (RD-A-1 /1)-Z8-A011-IRR | 2027-01-28 → 2027-06-22 (+145d) | 2027-01-30 → 2027-06-23 (+144d) |  |  |
| RHD4CZ8A011IRR1300 | Installing for HDPE Pipline 160 mm - (RD-A-1 /1)-Z8-A011-IRR | 2027-01-31 → 2027-06-24 (+144d) | 2027-02-01 → 2027-06-26 (+145d) |  |  |
| RHD4CZ8A011IRR1400 | Primary Test for HDPE Pipline 160 mm - (RD-A-1 /1)-Z8-A011-IRR | 2027-02-02 → 2027-06-27 (+145d) | 2027-02-03 → 2027-06-28 (+145d) |  |  |
| RHD4CZ8A011IRR1500 | Backfilling and warning tape works for HDPE Pipline 160 mm - (RD-A-1 /1)-Z8-A011-IRR | 2027-02-04 → 2027-06-29 (+145d) | 2027-02-06 → 2027-06-30 (+144d) |  |  |
| 6115 | **RHD4-02-002-A011-(IRR)-Gate Valves (Direct Buried)** | 2027-02-14 → 2027-07-08 (+144d) | 2027-02-20 → 2027-07-14 (+144d) |  |  |
| RHD4CZ8A011IRR3100 | Installation for Direct Buried Gate Valves - (RD-A-1 /1)-Z8-A011-IRR | 2027-02-14 → 2027-07-08 (+144d) | 2027-02-16 → 2027-07-11 (+145d) |  |  |
| RHD4CZ8A011IRR3200 | Stem and Service box for Direct Buried Gate Valves - (RD-A-1 /1)-Z8-A011-IRR | 2027-02-17 → 2027-07-12 (+145d) | 2027-02-20 → 2027-07-14 (+144d) |  |  |
| 6116 | **RHD4-02-002-A011-(IRR)-Butterfly Valve Chamber** | 2027-01-28 → 2027-06-22 (+145d) | 2027-02-06 → 2027-06-30 (+144d) |  |  |
| RHD4CZ8A011IRR2100 | Excavation and Bedding for Butterfly Valve Chamber for Irrigation Network - (RD-A-1 /1)-Z8-A011-IRR | 2027-01-28 → 2027-06-22 (+145d) | 2027-01-30 → 2027-06-23 (+144d) |  |  |
| RHD4CZ8A011IRR2200 | PC works for Butterfly Valve Chamber for Irrigation Network - (RD-A-1 /1)-Z8-A011-IRR | 2027-01-31 → 2027-06-24 (+144d) | 2027-02-01 → 2027-06-26 (+145d) |  |  |
| RHD4CZ8A011IRR2300 | Installation for Butterfly Valve Chamber for Irrigation Network - (RD-A-1 /1)-Z8-A011-IRR | 2027-02-02 → 2027-06-27 (+145d) | 2027-02-03 → 2027-06-28 (+145d) |  |  |
| RHD4CZ8A011IRR2400 | Backfilling works for Butterfly Valve Chamber for Irrigation Network - (RD-A-1 /1)-Z8-A011-IRR | 2027-02-04 → 2027-06-29 (+145d) | 2027-02-06 → 2027-06-30 (+144d) |  |  |
| 6117 | **RHD4-02-002-A011-(IRR)-Butterfly Valves** | 2027-02-14 → 2027-07-08 (+144d) | 2027-02-17 → 2027-07-12 (+145d) |  |  |
| RHD4CZ8A011IRR3101 | Installation for Butterfly Valves for Irrigation Network - (RD-A-1 /1)-Z8-A011-IRR | 2027-02-14 → 2027-07-08 (+144d) | 2027-02-15 → 2027-07-10 (+145d) |  |  |
| RHD4CZ8A011IRR3201 | Stem and Service box for Butterfly Valves for Irrigation Network - (RD-A-1 /1)-Z8-A011-IRR | 2027-02-16 → 2027-07-11 (+145d) | 2027-02-17 → 2027-07-12 (+145d) |  |  |
| 1769 | **RHD4-02-002-A011-(IRR)-Air Valve Chamber** | 2027-01-28 → 2027-06-22 (+145d) | 2027-02-06 → 2027-06-30 (+144d) |  |  |
| RHD4CZ8A011IRR2102 | Excavation and Bedding for Valve Chamber for Irrigation Network - (RD-A-1 /1)-Z8-A011-IRR | 2027-01-28 → 2027-06-22 (+145d) | 2027-01-30 → 2027-06-23 (+144d) |  |  |
| RHD4CZ8A011IRR2202 | PC works for Valve Chamber for Irrigation Network - (RD-A-1 /1)-Z8-A011-IRR | 2027-01-31 → 2027-06-24 (+144d) | 2027-02-01 → 2027-06-26 (+145d) |  |  |
| RHD4CZ8A011IRR2302 | Installation for Valve Chamber for Irrigation Network - (RD-A-1 /1)-Z8-A011-IRR | 2027-02-02 → 2027-06-27 (+145d) | 2027-02-03 → 2027-06-28 (+145d) |  |  |
| RHD4CZ8A011IRR2402 | Backfilling works for Valve Chamber for Irrigation Network - (RD-A-1 /1)-Z8-A011-IRR | 2027-02-04 → 2027-06-29 (+145d) | 2027-02-06 → 2027-06-30 (+144d) |  |  |
| 1770 | **RHD4-02-002-A011-(IRR)-Air Valves** | 2027-02-04 → 2027-06-29 (+145d) | 2027-02-08 → 2027-07-03 (+145d) |  |  |
| RHD4CZ8A011IRR3103 | Installation for Air Valves for Irrigation Network - (RD-A-1 /1)-Z8-A011-IRR | 2027-02-04 → 2027-06-29 (+145d) | 2027-02-06 → 2027-06-30 (+144d) |  |  |
| RHD4CZ8A011IRR3203 | Stem and Service box for Air Valves for Irrigation Network - (RD-A-1 /1)-Z8-A011-IRR | 2027-02-07 → 2027-07-01 (+144d) | 2027-02-08 → 2027-07-03 (+145d) |  |  |
| 8762 | **RHD4-02-002-A011-(IRR)-HDPE Pipes - 500 mm diameter** | 2027-01-28 → 2027-06-22 (+145d) | 2027-03-08 → 2027-07-29 (+143d) |  |  |
| RHD4CZ8A011IRR1107 | Excavation works for HDPE Pipline 500 mm - (RD-A-1 /1)-Z8-A011-IRR | 2027-01-28 → 2027-06-22 (+145d) | 2027-02-06 → 2027-06-30 (+144d) |  | resources Skilled labor [82.44 h]; Unskilled Labor [82.44 h]; Equipment Opreator [98.88 h]; Excavator-Poclain [82.44 h]; Dump Truck [16.44 h]; HDPE (500mm Diameter) - TSE - Depth: less than 1.5m [72.41 m]; HDPE (500mm Diameter) - TSE - Depth: more than 1.51m [61.7 m] → Skilled labor [82.4 h]; Unskilled Labor [82.4 h]; Equipment Opreator [98.88 h]; Excavator-Poclain [82.4 h]; Dump Truck [16.44 h]; HDPE (500mm Diameter) - TSE - Depth: less than 1.5m [72.41 m]; HDPE (500mm Diameter) - TSE - Depth: more than 1.51m [61.7 m] |
| RHD4CZ8A011IRR1207 | Bedding works for HDPE Pipline 500 mm - (RD-A-1 /1)-Z8-A011-IRR | 2027-02-07 → 2027-07-01 (+144d) | 2027-02-14 → 2027-07-08 (+144d) |  |  |
| RHD4CZ8A011IRR1307 | Installing for HDPE Pipline 500 mm - (RD-A-1 /1)-Z8-A011-IRR | 2027-02-15 → 2027-07-10 (+145d) | 2027-02-24 → 2027-07-18 (+144d) |  | resources Unskilled Labor [164.88 h]; Plumber [82.44 h]; Equipment Opreator [82.44 h]; Boom Truck [82.44 h]; HDPE (500mm Diameter) - TSE - Depth: less than 1.5m [325.82 m]; HDPE (500mm Diameter) - TSE - Depth: more than 1.51m [164.53 m] → Unskilled Labor [164.88 h]; Plumber [82.4 h]; Equipment Opreator [82.4 h]; Boom Truck [82.4 h]; HDPE (500mm Diameter) - TSE - Depth: less than 1.5m [325.82 m]; HDPE (500mm Diameter) - TSE - Depth: more than 1.51m [164.53 m] |
| RHD4CZ8A011IRR1407 | Primary Test for HDPE Pipline 500 mm - (RD-A-1 /1)-Z8-A011-IRR | 2027-02-25 → 2027-07-19 (+144d) | 2027-02-28 → 2027-07-21 (+143d) |  |  |
| RHD4CZ8A011IRR1507 | Backfilling and warning tape works for HDPE Pipline 500 mm - (RD-A-1 /1)-Z8-A011-IRR | 2027-03-01 → 2027-07-22 (+143d) | 2027-03-08 → 2027-07-29 (+143d) |  |  |
| 3651 | **RHD4-02-002-A011-(IRR)-HDPE Pipes - 250 mm diameter** | 2027-02-07 → 2027-07-01 (+144d) | 2027-02-17 → 2027-07-12 (+145d) |  |  |
| RHD4CZ8A011IRR1103 | Excavation works for HDPE Pipline 250 mm - (RD-A-1 /1)-Z8-A011-IRR | 2027-02-07 → 2027-07-01 (+144d) | 2027-02-08 → 2027-07-03 (+145d) |  |  |
| RHD4CZ8A011IRR1203 | Bedding works for HDPE Pipline 250 mm - (RD-A-1 /1)-Z8-A011-IRR | 2027-02-09 → 2027-07-04 (+145d) | 2027-02-10 → 2027-07-05 (+145d) |  |  |
| RHD4CZ8A011IRR1303 | Installing for HDPE Pipline 250 mm - (RD-A-1 /1)-Z8-A011-IRR | 2027-02-11 → 2027-07-06 (+145d) | 2027-02-13 → 2027-07-07 (+144d) |  |  |
| RHD4CZ8A011IRR1403 | Primary Test for HDPE Pipline 250 mm - (RD-A-1 /1)-Z8-A011-IRR | 2027-02-14 → 2027-07-08 (+144d) | 2027-02-15 → 2027-07-10 (+145d) |  | resources Unskilled Labor [0.76 h]; Plumber [0.76 h]; Equipment Opreator [0.76 h]; Water Truck [0.76 h]; HDPE (250mm Diameter) - TSE - Depth: less than 1.5m [3.79 m]; HDPE (250mm Diameter) - TSE - Depth: more than 1.51m [1.96 m] → Unskilled Labor [0.8 h]; Plumber [0.8 h]; Equipment Opreator [0.8 h]; Water Truck [0.8 h]; HDPE (250mm Diameter) - TSE - Depth: less than 1.5m [3.79 m]; HDPE (250mm Diameter) - TSE - Depth: more than 1.51m [1.96 m] |
| RHD4CZ8A011IRR1503 | Backfilling and warning tape works for HDPE Pipline 250 mm - (RD-A-1 /1)-Z8-A011-IRR | 2027-02-16 → 2027-07-11 (+145d) | 2027-02-17 → 2027-07-12 (+145d) |  |  |
| 7842 | **RHD4-02-002-Z8-A011-Medium Voltage Network - MV** | 2026-09-13 → 2027-03-23 (+191d) | 2027-03-03 → 2027-08-22 (+172d) |  |  |
| 7843 | **RHD4-02-002-A011-(MV)-Medium Voltage cable trench** | 2027-01-26 → 2027-07-06 (+161d) | 2027-02-23 → 2027-08-08 (+166d) |  |  |
| RHD4CZ8A011MV1100 | Excavation for Medium Voltage Trench - (RD-A-1 /1)-Z8-A011-MV | 2027-01-26 → 2027-07-06 (+161d) | 2027-02-02 → 2027-07-13 (+161d) |  |  |
| RHD4CZ8A011MV1200 | Trench Backfilling for Medium Voltage Network - (RD-A-1 /1)-Z8-A011-MV | 2027-02-15 → 2027-08-01 (+167d) | 2027-02-23 → 2027-08-08 (+166d) |  |  |
| 7844 | **RHD4-02-002-A011-(MV)-Medium Voltage duct banks** | 2026-09-13 → 2027-03-23 (+191d) | 2026-11-11 → 2027-05-25 (+195d) |  |  |
| RHD4CZ8A011MV2100 | Excavation of Duct Banks for Medium Voltage Network - (RD-A-1 /1)-Z8-A011-MV | 2026-09-13 → 2027-03-23 (+191d) | 2026-09-27 → 2027-04-05 (+190d) |  |  |
| RHD4CZ8A011MV2200 | Installation of Duct Banks for Medium Voltage Network - (RD-A-1 /1)-Z8-A011-MV | 2026-09-28 → 2027-04-06 (+190d) | 2026-10-18 → 2027-04-26 (+190d) |  |  |
| RHD4CZ8A011MV2300 | Pouring of Duct Banks for Medium Voltage Network - (RD-A-1 /1)-Z8-A011-MV | 2026-10-19 → 2027-04-27 (+190d) | 2026-11-01 → 2027-05-10 (+190d) |  |  |
| RHD4CZ8A011MV2400 | Backfilling of Duct Banks for Medium Voltage Network - (RD-A-1 /1)-Z8-A011-MV | 2026-11-02 → 2027-05-11 (+190d) | 2026-11-11 → 2027-05-25 (+195d) |  |  |
| 7845 | **RHD4-02-002-A011-(MV)-Medium Voltage cables 3Cx 500 mm²** | 2027-02-03 → 2027-07-14 (+161d) | 2027-03-03 → 2027-08-22 (+172d) |  |  |
| RHD4CZ8A011MV3100 | Installation of Medium Voltage Cables 3Cx 500 mm² - (RD-A-1 /1)-Z8-A011-MV | 2027-02-03 → 2027-07-14 (+161d) | 2027-02-08 → 2027-07-25 (+167d) | 5d → 10d |  |
| RHD4CZ8A011MV3200 | Joints Installation of Medium Voltage Cables 3Cx 500 mm² - (RD-A-1 /1)-Z8-A011-MV | 2027-02-09 → 2027-07-26 (+167d) | 2027-02-14 → 2027-07-31 (+167d) |  | resources Skilled labor [49.01 h]; Unskilled Labor [196.03 h]; Electrician [98.01 h]; Equipment Opreator [49.01 h]; Boom Truck [49.01 h]; Straight joints cables for 13.8 kv 3Cx 500 mm², Al /XLPE/LLDPE [9 Unit] → Skilled labor [49.01 h]; Unskilled Labor [196 h]; Electrician [98.01 h]; Equipment Opreator [49.01 h]; Boom Truck [49.01 h]; Straight joints cables for 13.8 kv 3Cx 500 mm², Al /XLPE/LLDPE [9 Unit] |
| RHD4CZ8A011MV3300 | Testing of Medium Voltage Cables 3Cx 500 mm² - (RD-A-1 /1)-Z8-A011-MV | 2027-02-24 → 2027-08-09 (+166d) | 2027-03-01 → 2027-08-19 (+171d) | 5d → 10d |  |
| RHD4CZ8A011MV3400 | Termination of Medium Voltage Cables 3Cx 500 mm² - (RD-A-1 /1)-Z8-A011-MV | 2027-03-02 → 2027-08-21 (+172d) | 2027-03-03 → 2027-08-22 (+172d) |  |  |
| 7846 | **RHD4-02-002-A011-(MV)-Medium Voltage cables 3Cx 50 mm²** | 2027-02-03 → 2027-07-14 (+161d) | 2027-02-28 → 2027-08-17 (+170d) |  |  |
| RHD4CZ8A011MV3101 | Installation of Medium Voltage Cables 3Cx 50 mm² - (RD-A-1 /1)-Z8-A011-MV | 2027-02-03 → 2027-07-14 (+161d) | 2027-02-04 → 2027-07-15 (+161d) |  |  |
| RHD4CZ8A011MV3301 | Testing of Medium Voltage Cables 3Cx 50 mm² - (RD-A-1 /1)-Z8-A011-MV | 2027-02-24 → 2027-08-09 (+166d) | 2027-02-25 → 2027-08-10 (+166d) |  |  |
| RHD4CZ8A011MV3401 | Termination of Medium Voltage Cables 3Cx 50 mm² - (RD-A-1 /1)-Z8-A011-MV | 2027-02-27 → 2027-08-16 (+170d) | 2027-02-28 → 2027-08-17 (+170d) |  |  |
| 7848 | **RHD4-02-002-A011-(MV)-Unit Substations** | 2027-02-15 → 2027-08-01 (+167d) | 2027-02-24 → 2027-08-15 (+172d) |  |  |

| ID | Task | Start | Finish | Duration | Other |
| --- | --- | --- | --- | --- | --- |
| RHD4CZ8A011MV5100 | Excavation for Unit Substations for Medium Voltage Network - (RD-A-1 /1)-Z8-A011-MV | 2027-02-15 → 2027-08-01 (+167d) | 2027-02-16 → 2027-08-02 (+167d) |  |  |
| RHD4CZ8A011MV5200 | Concrete Base Placement for Unit Substations for Medium Voltage Network - (RD-A-1 /1)-Z8-A011-MV | 2027-02-17 → 2027-08-03 (+167d) | 2027-02-18 → 2027-08-04 (+167d) |  |  |
| RHD4CZ8A011MV5300 | Installation for Fences and doors for Medium Voltage Network - (RD-A-1 /1)-Z8-A011-MV | 2027-02-20 → 2027-08-05 (+166d) | 2027-02-21 → 2027-08-10 (+170d) | 2d → 5d |  |
| RHD4CZ8A011MV5400 | Installation for Unit Substations for Medium Voltage Network - (RD-A-1 /1)-Z8-A011-MV | 2027-02-23 → 2027-08-11 (+169d) | 2027-02-24 → 2027-08-15 (+172d) | 2d → 4d |  |
| 7849 | **RHD4-02-002-Z8-A011-Low Voltage Network - LV** | 2027-03-13 → 2027-07-31 (+140d) | 2027-04-21 → 2027-09-13 (+145d) |  |  |
| 7850 | **RHD4-02-002-A011-(LV)-Low Voltage duct banks** | 2027-03-13 → 2027-07-31 (+140d) | 2027-04-04 → 2027-08-22 (+140d) |  |  |
| RHD4CZ8A011LV2100 | Excavation of Duct Banks for Low Voltage Network - (RD-A-1 /1)-Z8-A011-LV | 2027-03-13 → 2027-07-31 (+140d) | 2027-03-17 → 2027-08-04 (+140d) |  |  |
| RHD4CZ8A011LV2200 | Installation of Duct Banks for Low Voltage Network - (RD-A-1 /1)-Z8-A011-LV | 2027-03-18 → 2027-08-05 (+140d) | 2027-03-23 → 2027-08-10 (+140d) |  |  |
| RHD4CZ8A011LV2300 | Pouring of Duct Banks for Low Voltage Network - (RD-A-1 /1)-Z8-A011-LV | 2027-03-24 → 2027-08-11 (+140d) | 2027-03-29 → 2027-08-16 (+140d) |  |  |
| RHD4CZ8A011LV2400 | Backfilling of Duct Banks for Low Voltage Network - (RD-A-1 /1)-Z8-A011-LV | 2027-03-30 → 2027-08-17 (+140d) | 2027-04-04 → 2027-08-22 (+140d) |  |  |
| 7851 | **RHD4-02-002-A011-(LV)-Low Voltage Drawpit** | 2027-03-13 → 2027-08-23 (+163d) | 2027-03-16 → 2027-08-26 (+163d) |  |  |
| RHD4CZ8A011LV5100 | Excavation of Drawpit size 900x900x1000mm for Low Voltage Network - (RD-A-1 /1)-Z8-A011-LV | 2027-03-13 → 2027-08-23 (+163d) | 2027-03-14 → 2027-08-24 (+163d) |  |  |
| RHD4CZ8A011LV5200 | Installation of Drawpit size 900x900x1000mm for Low Voltage Network - (RD-A-1 /1)-Z8-A011-LV | 2027-03-15 → 2027-08-25 (+163d) | 2027-03-16 → 2027-08-26 (+163d) |  |  |
| 7852 | **RHD4-02-002-A011-(LV)-Low Voltage cables** | 2027-04-05 → 2027-08-28 (+145d) | 2027-04-14 → 2027-09-06 (+145d) |  |  |
| RHD4CZ8A011LV3100 | Excavation for Low Voltage Cables for Low Voltage Network - (RD-A-1 /1)-Z8-A011-LV | 2027-04-05 → 2027-08-28 (+145d) | 2027-04-07 → 2027-08-30 (+145d) |  |  |
| RHD4CZ8A011LV3200 | Cable Laying of Low Voltage Cables for Low Voltage Network - (RD-A-1 /1)-Z8-A011-LV | 2027-04-08 → 2027-08-31 (+145d) | 2027-04-10 → 2027-09-01 (+144d) |  |  |
| RHD4CZ8A011LV3300 | Warning tape and Backfill for Low Voltage Cables for Low Voltage Network - (RD-A-1 /1)-Z8-A011-LV | 2027-04-11 → 2027-09-02 (+144d) | 2027-04-12 → 2027-09-04 (+145d) |  |  |
| RHD4CZ8A011LV3400 | Testing of Low Voltage Cables for Low Voltage Network - (RD-A-1 /1)-Z8-A011-LV | 2027-04-13 → 2027-09-05 (+145d) | 2027-04-14 → 2027-09-06 (+145d) |  |  |
| 7853 | **RHD4-02-002-A011-(LV)-Low Voltage Distribution Pillars** | 2027-04-15 → 2027-09-07 (+145d) | 2027-04-21 → 2027-09-13 (+145d) |  |  |
| RHD4CZ8A011LV4100 | Leveling for Distribution Pillars for Low Voltage Network - (RD-A-1 /1)-Z8-A011-LV | 2027-04-15 → 2027-09-07 (+145d) | 2027-04-17 → 2027-09-08 (+144d) |  |  |
| RHD4CZ8A011LV4200 | Lean Concrete for Distribution Pillars for Low Voltage Network - (RD-A-1 /1)-Z8-A011-LV | 2027-04-18 → 2027-09-09 (+144d) | 2027-04-19 → 2027-09-11 (+145d) |  | resources Skilled labor [3.59 h]; Unskilled Labor [7.3 h]; Equipment Opreator [1.42 h]; Concrete Mixer Truck [0.76 h]; Concrete Pump [0.76 h]; Supply and installation of KWH meter mounting frame including concrete block wall for installation of KWH meter according to the standards and specifications of SEC [0.25 Unit] → Skilled labor [3.59 h]; Unskilled Labor [7.3 h]; Equipment Opreator [1.42 h]; Concrete Mixer Truck [0.8 h]; Concrete Pump [0.8 h]; Supply and installation of KWH meter mounting frame including concrete block wall for installation of KWH meter according to the standards and specifications of SEC [0.25 Unit] |
| RHD4CZ8A011LV4300 | Installation of Distribution Pillars for Low Voltage Network - (RD-A-1 /1)-Z8-A011-LV | 2027-04-20 → 2027-09-12 (+145d) | 2027-04-21 → 2027-09-13 (+145d) |  |  |
| 7855 | **RHD4-02-002-Z8-A011-Street Lighting Network - SL** | 2027-04-22 → 2027-09-14 (+145d) | 2027-06-20 → 2027-11-07 (+140d) |  |  |
| 7857 | **RHD4-02-002-A011-(SL)-Street Lighting Drawpit** | 2027-04-22 → 2027-09-14 (+145d) | 2027-04-26 → 2027-09-18 (+145d) |  |  |
| RHD4CZ8A011SL5100 | Excavation of Drawpit size 600x600x900mm for Street Lighting Network - (RD-A-1 /1)-Z8-A011-SL | 2027-04-22 → 2027-09-14 (+145d) | 2027-04-24 → 2027-09-15 (+144d) |  | resources Skilled labor [1.85 h]; Unskilled Labor [1.85 h]; Equipment Opreator [1.42 h]; Excavator-Poclain [0.76 h]; Dump Truck [0.76 h]; Drawpit with medium duty steel cover, size600x600x900mm, [0.3 Unit] → Skilled labor [1.85 h]; Unskilled Labor [1.85 h]; Equipment Opreator [1.42 h]; Excavator-Poclain [0.8 h]; Dump Truck [0.8 h]; Drawpit with medium duty steel cover, size600x600x900mm, [0.3 Unit] |
| RHD4CZ8A011SL5200 | Installation of Drawpit size 600x600x900mm for Street Lighting Network - (RD-A-1 /1)-Z8-A011-SL | 2027-04-25 → 2027-09-16 (+144d) | 2027-04-26 → 2027-09-18 (+145d) |  | resources Skilled labor [1.85 h]; Unskilled Labor [1.85 h]; Equipment Opreator [0.76 h]; Boom Truck [0.76 h]; Drawpit with medium duty steel cover, size600x600x900mm, [1.7 Unit] → Skilled labor [1.85 h]; Unskilled Labor [1.85 h]; Equipment Opreator [0.8 h]; Boom Truck [0.8 h]; Drawpit with medium duty steel cover, size600x600x900mm, [1.7 Unit] |
| 7858 | **RHD4-02-002-A011-(SL)-Street Lighting cables** | 2027-04-27 → 2027-09-19 (+145d) | 2027-05-20 → 2027-10-07 (+140d) |  |  |
| RHD4CZ8A011SL3100 | Excavation for Street Lighting Cables for Street Lighting Network - (RD-A-1 /1)-Z8-A011-SL | 2027-04-27 → 2027-09-19 (+145d) | 2027-05-02 → 2027-09-25 (+146d) |  |  |
| RHD4CZ8A011SL3200 | Cable Laying of Street Lighting Cables for Street Lighting Network - (RD-A-1 /1)-Z8-A011-SL | 2027-05-03 → 2027-09-26 (+146d) | 2027-05-08 → 2027-09-29 (+144d) | 5d → 4d |  |
| RHD4CZ8A011SL3300 | Warning tape and Backfill for Street Lighting Cables for Street Lighting Network - (RD-A-1 /1)-Z8-A011-SL | 2027-05-09 → 2027-09-30 (+144d) | 2027-05-12 → 2027-10-04 (+145d) |  |  |
| RHD4CZ8A011SL3400 | Testing of Street Lighting Cables for Street Lighting Network - (RD-A-1 /1)-Z8-A011-SL | 2027-05-13 → 2027-10-05 (+145d) | 2027-05-20 → 2027-10-07 (+140d) |  |  |
| 7859 | **RHD4-02-002-A011-(SL)-Street Lighting Poles** | 2027-05-22 → 2027-10-09 (+140d) | 2027-06-10 → 2027-10-28 (+140d) |  |  |
| RHD4CZ8A011SL1100 | Excavation for RC Base for Lighting Poles for Street Lighting Network - (RD-A-1 /1)-Z8-A011-SL | 2027-05-22 → 2027-10-09 (+140d) | 2027-05-24 → 2027-10-11 (+140d) |  |  |
| RHD4CZ8A011SL1200 | Installation for RC Base for Lighting Poles for Street Lighting Network - (RD-A-1 /1)-Z8-A011-SL | 2027-05-25 → 2027-10-12 (+140d) | 2027-05-27 → 2027-10-14 (+140d) |  |  |
| RHD4CZ8A011SL1300 | Backfill for RC Base for Lighting Poles for Street Lighting Network - (RD-A-1 /1)-Z8-A011-SL | 2027-05-29 → 2027-10-16 (+140d) | 2027-05-31 → 2027-10-18 (+140d) |  |  |
| RHD4CZ8A011SL1400 | Installation for Lighting Poles for Street Lighting Network - (RD-A-1 /1)-Z8-A011-SL | 2027-06-01 → 2027-10-19 (+140d) | 2027-06-05 → 2027-10-23 (+140d) |  |  |
| RHD4CZ8A011SL1500 | Luminaire Installation for Lighting Poles for Street Lighting Network - (RD-A-1 /1)-Z8-A011-SL | 2027-06-06 → 2027-10-24 (+140d) | 2027-06-10 → 2027-10-28 (+140d) |  | resources Unskilled Labor [101.61 h]; Electrician [50.86 h]; Equipment Opreator [20.36 h]; Boom Truck [20.36 h]; Street Lighting( LED) Luminaire of Output ?39018 lumen [70 Unit] → Unskilled Labor [101.6 h]; Electrician [50.86 h]; Equipment Opreator [20.36 h]; Boom Truck [20.36 h]; Street Lighting( LED) Luminaire of Output ?39018 lumen [70 Unit] |
| 7860 | **RHD4-02-002-A011-(SL)-Street Lighting Feeder Pillars** | 2027-06-12 → 2027-10-30 (+140d) | 2027-06-17 → 2027-11-04 (+140d) |  |  |
| RHD4CZ8A011SL4100 | Leveling for Distribution Pillars for Street Lighting Network - (RD-A-1 /1)-Z8-A011-SL | 2027-06-12 → 2027-10-30 (+140d) | 2027-06-13 → 2027-10-31 (+140d) |  |  |
| RHD4CZ8A011SL4200 | Lean Concrete for Distribution Pillars for Street Lighting Network - (RD-A-1 /1)-Z8-A011-SL | 2027-06-14 → 2027-11-01 (+140d) | 2027-06-15 → 2027-11-02 (+140d) |  |  |
| RHD4CZ8A011SL4300 | Installation of Distribution Pillars for Street Lighting Network - (RD-A-1 /1)-Z8-A011-SL | 2027-06-16 → 2027-11-03 (+140d) | 2027-06-17 → 2027-11-04 (+140d) |  |  |
| 7861 | **RHD4-02-002-A011-(SL)-Street Lighting Earthing System** | 2027-06-19 → 2027-11-06 (+140d) | 2027-06-20 → 2027-11-07 (+140d) |  |  |
| RHD4CZ8A011SL6100 | Installation of Earthing for Lighting Poles and Fedder Pillers for Street Lighting Network - (RD-A-1 /1)-Z8-A011-SL | 2027-06-19 → 2027-11-06 (+140d) | 2027-06-20 → 2027-11-07 (+140d) |  |  |
| 7867 | **RHD4-02-002-Z8-A011-Telecommunications Network - TC** | 2026-08-18 → 2027-02-10 (+176d) | 2027-07-28 → 2027-12-15 (+140d) |  |  |
| 7868 | **RHD4-02-002-A011-(TC)-Telecommunications Ducts** | 2027-06-21 → 2027-11-08 (+140d) | 2027-07-21 → 2027-12-08 (+140d) |  |  |
| RHD4CZ8A011TC2100 | Excavation of HDPE Ducts for Telecom Network - (RD-A-1 /1)-Z8-A011-TC | 2027-06-21 → 2027-11-08 (+140d) | 2027-06-29 → 2027-11-16 (+140d) |  | resources Skilled labor [79.17 h]; Unskilled Labor [79.17 h]; Equipment Opreator [158.45 h]; Excavator-Poclain [79.17 h]; Dump Truck [79.17 h]; (6*50mm) HDPE ducts -TC [179.88 m]; (6*50mm+2*32mm) HDPE ducts -TC [34.46 m]; (2*32mm) HDPE ducts -TC [3.9 m] → Skilled labor [79.2 h]; Unskilled Labor [79.2 h]; Equipment Opreator [158.45 h]; Excavator-Poclain [79.2 h]; Dump Truck [79.2 h]; (6*50mm) HDPE ducts -TC [179.88 m]; (6*50mm+2*32mm) HDPE ducts -TC [34.46 m]; (2*32mm) HDPE ducts -TC [3.9 m] |
| RHD4CZ8A011TC2200 | Installation of HDPE Ducts for Telecom Network - (RD-A-1 /1)-Z8-A011-TC | 2027-06-30 → 2027-11-17 (+140d) | 2027-07-12 → 2027-11-29 (+140d) |  |  |
| RHD4CZ8A011TC2400 | Backfilling of HDPE Ducts for Telecom Network - (RD-A-1 /1)-Z8-A011-TC | 2027-07-13 → 2027-11-30 (+140d) | 2027-07-21 → 2027-12-08 (+140d) |  | resources Skilled labor [79.17 h]; Unskilled Labor [79.17 h]; Equipment Opreator [31.69 h]; Excavator-Poclain [31.69 h]; (6*50mm) HDPE ducts -TC [134.91 m]; (6*50mm+2*32mm) HDPE ducts -TC [25.85 m]; (2*32mm) HDPE ducts -TC [2.93 m] → Skilled labor [79.2 h]; Unskilled Labor [79.2 h]; Equipment Opreator [31.69 h]; Excavator-Poclain [31.69 h]; (6*50mm) HDPE ducts -TC [134.91 m]; (6*50mm+2*32mm) HDPE ducts -TC [25.85 m]; (2*32mm) HDPE ducts -TC [2.93 m] |
| 7869 | **RHD4-02-002-A011-(TC)-Telecommunications Manholes** | 2027-07-22 → 2027-12-09 (+140d) | 2027-07-28 → 2027-12-15 (+140d) |  |  |
| RHD4CZ8A011TC5100 | Excavation for Manholes for Telecom Network - (RD-A-1 /1)-Z8-A011-TC | 2027-07-22 → 2027-12-09 (+140d) | 2027-07-25 → 2027-12-12 (+140d) |  |  |
| RHD4CZ8A011TC5200 | Installation of Manholes for Telecom Network - (RD-A-1 /1)-Z8-A011-TC | 2027-07-26 → 2027-12-13 (+140d) | 2027-07-28 → 2027-12-15 (+140d) |  |  |
| 7870 | **RHD4-02-002-A011-(TC)-Telecomminications Road Crossings** | 2026-08-18 → 2027-02-10 (+176d) | 2026-08-26 → 2027-02-27 (+185d) |  |  |
| RHD4CZ8A011TC3100 | Excavation for Road Crossings for Telecom Network - (RD-A-1 /1)-Z8-A011-TC | 2026-08-18 → 2027-02-10 (+176d) | 2026-08-19 → 2027-02-13 (+178d) | 2d → 3d |  |
| RHD4CZ8A011TC3200 | Installation of Road Crossings for Telecom Network - (RD-A-1 /1)-Z8-A011-TC | 2026-08-20 → 2027-02-14 (+178d) | 2026-08-22 → 2027-02-17 (+179d) | 2d → 4d |  |
| RHD4CZ8A011TC3300 | Pouring of Road Crossings for Telecom Network - (RD-A-1 /1)-Z8-A011-TC | 2026-08-23 → 2027-02-18 (+179d) | 2026-08-24 → 2027-02-23 (+183d) | 2d → 4d |  |
| RHD4CZ8A011TC3400 | Backfilling of Road Crossings for Telecom Network - (RD-A-1 /1)-Z8-A011-TC | 2026-08-25 → 2027-02-24 (+183d) | 2026-08-26 → 2027-02-27 (+185d) | 2d → 3d |  |
| 7871 | **RHD4-02-002-Z8-A011-Information and Communication Technologies - ICT** | 2027-07-29 → 2027-12-16 (+140d) | 2027-09-21 → 2028-02-08 (+140d) |  |  |
| 7872 | **RHD4-02-002-A011-(ICT)-Information and Communication Technologies Ducts** | 2027-07-29 → 2027-12-16 (+140d) | 2027-09-14 → 2028-02-01 (+140d) |  |  |
| RHD4CZ8A011ICT2100 | Excavation of HDPE Ducts for ICT Network - (RD-A-1 /1)-Z8-A011-ICT | 2027-07-29 → 2027-12-16 (+140d) | 2027-08-11 → 2027-12-29 (+140d) |  |  |
| RHD4CZ8A011ICT2200 | Installation of HDPE Ducts for ICT Network - (RD-A-1 /1)-Z8-A011-ICT | 2027-08-12 → 2027-12-30 (+140d) | 2027-08-31 → 2028-01-18 (+140d) |  |  |
| RHD4CZ8A011ICT2400 | Backfilling of HDPE Ducts for ICT Network - (RD-A-1 /1)-Z8-A011-ICT | 2027-09-01 → 2028-01-19 (+140d) | 2027-09-14 → 2028-02-01 (+140d) |  |  |
| 7873 | **RHD4-02-002-A011-(ICT)-Information and Communication Technologies Manholes** | 2027-09-15 → 2028-02-02 (+140d) | 2027-09-21 → 2028-02-08 (+140d) |  |  |
| RHD4CZ8A011ICT5100 | Excavation for Manholes for ICT Network - (RD-A-1 /1)-Z8-A011-ICT | 2027-09-15 → 2028-02-02 (+140d) | 2027-09-18 → 2028-02-05 (+140d) |  |  |
| RHD4CZ8A011ICT5200 | Installation of Manholes for ICT Network - (RD-A-1 /1)-Z8-A011-ICT | 2027-09-19 → 2028-02-06 (+140d) | 2027-09-21 → 2028-02-08 (+140d) |  |  |
| 7875 | **RHD4-02-002-Z8-A011-Security Network - CCTV** | 2027-09-22 → 2028-02-09 (+140d) | 2027-10-21 → 2028-03-13 (+144d) |  |  |
| 7876 | **RHD4-02-002-A011-(CCTV)-Civil Works** | 2027-09-22 → 2028-02-09 (+140d) | 2027-09-28 → 2028-02-14 (+139d) |  |  |
| RHD4CZ8A011CCTV2100 | Civil Works for Security Network - (RD-A-1 /1)-Z8-A011-CCTV | 2027-09-22 → 2028-02-09 (+140d) | 2027-09-28 → 2028-02-14 (+139d) |  |  |
| 7877 | **RHD4-02-002-A011-(CCTV)-CCTV Poles** | 2027-09-29 → 2028-02-15 (+139d) | 2027-10-10 → 2028-03-01 (+143d) |  |  |
| RHD4CZ8A011CCTV1100 | Excavation for RC Base for CCTV Poles for Security Network - (RD-A-1 /1)-Z8-A011-CCTV | 2027-09-29 → 2028-02-15 (+139d) | 2027-09-30 → 2028-02-16 (+139d) |  |  |
| RHD4CZ8A011CCTV1200 | Installation for RC Base for CCTV Poles for Security Network - (RD-A-1 /1)-Z8-A011-CCTV | 2027-10-02 → 2028-02-17 (+138d) | 2027-10-03 → 2028-02-19 (+139d) |  |  |

| ID | Task | Start | Finish | Duration | Complete | Other |
| --- | --- | --- | --- | --- | --- | --- |
| RHD4CZ8A011CCTV1300 | Backfill for RC Base for CCTV Poles for Security Network - (RD-A-1 /1)-Z8-A011-CCTV | 2027-10-04 → 2028-02-20 (+139d) | 2027-10-05 → 2028-02-21 (+139d) |  |  |  |
| RHD4CZ8A011CCTV1400 | Installation for CCTV Poles for Security Network - (RD-A-1 /1)-Z8-A011-CCTV | 2027-10-06 → 2028-02-23 (+140d) | 2027-10-07 → 2028-02-24 (+140d) |  |  |  |
| RHD4CZ8A011CCTV1500 | Protection post Installation for CCTV Poles for Security Network - (RD-A-1 /1)-Z8-A011-CCTV | 2027-10-09 → 2028-02-26 (+140d) | 2027-10-10 → 2028-03-01 (+143d) |  |  |  |
| 7878 | **RHD4-02-002-A011-(CCTV)-Camera** | 2027-10-11 → 2028-03-02 (+143d) | 2027-10-12 → 2028-03-04 (+144d) |  |  |  |
| RHD4CZ8A011CCTV3100 | Installation for Cameras for Security Network - (RD-A-1 /1)-Z8-A011-CCTV | 2027-10-11 → 2028-03-02 (+143d) | 2027-10-12 → 2028-03-04 (+144d) |  |  |  |
| 7879 | **RHD4-02-002-A011-(CCTV)-Power and Infrastructure** | 2027-10-09 → 2028-02-26 (+140d) | 2027-10-10 → 2028-03-01 (+143d) |  |  |  |
| RHD4CZ8A011CCTV4100 | Installation of Power outlet, UPS and midspan for PTZ Camerafor Cameras for Security Network - (RD-A-1 /1)-Z8-A011-CCTV | 2027-10-09 → 2028-02-26 (+140d) | 2027-10-10 → 2028-03-01 (+143d) |  |  |  |
| 7881 | **RHD4-02-002-A011-(CCTV)-CCTV Panels and Components** | 2027-10-13 → 2028-03-05 (+144d) | 2027-10-21 → 2028-03-13 (+144d) |  |  |  |
| RHD4CZ8A011CCTV6100 | Installation for CCTV Panels for Security Network - (RD-A-1 /1)-Z8-A011-CCTV | 2027-10-13 → 2028-03-05 (+144d) | 2027-10-21 → 2028-03-13 (+144d) |  |  |  |
| 7892 | **RHD4-02-002-Z8-RA04** | 2026-08-20 → 2026-07-22 (-29d) | 2028-04-02 → 2028-11-08 (+220d) |  |  |  |
| 8071 | **RHD4-02-002-Z8-RA04-Road Works - RD** | 2026-08-30 → 2026-07-22 (-39d) | 2028-04-02 → 2028-11-08 (+220d) |  |  |  |
| 8072 | **RHD4-02-002-RA04-(RD)-Subgrade** | 2026-08-30 → 2026-07-22 (-39d) | 2026-09-01 → 2026-07-28 (-35d) |  |  |  |
| RHD4CZ8RA04RD1100 | Supply, lay and compaction subgrade compacted thickness 300 mm for Roads - (ROUND-04)-Z8-RA04-RD | 2026-08-30 → 2026-07-22 A (-39d) | 2026-09-01 → 2026-07-28 A (-35d) |  | 0% → 100% |  |
| 8073 | **RHD4-02-002-RA04-(RD)-Aggregate Base Course** | 2026-09-02 → 2027-02-24 (+175d) | 2026-09-07 → 2027-03-01 (+175d) |  |  |  |
| RHD4CZ8RA04RD2100 | Supply, lay and compaction Aggregate base course compacted thickness 300 mmfor Roads - (ROUND-04)-Z8-RA04-RD | 2026-09-02 → 2027-02-24 (+175d) | 2026-09-07 → 2027-03-01 (+175d) |  |  |  |
| 8074 | **RHD4-02-002-RA04-(RD)-Bituminous base course Two Layers, including (MC1)&(RC2)** | 2026-09-08 → 2027-03-02 (+175d) | 2027-06-05 → 2027-11-04 (+152d) |  |  |  |
| RHD4CZ8RA04RD3100 | Supply, lay and Asphaltic base course including Prime Coat (MC1) for 1st Layer - (ROUND-04)-Z8-RA04-RD | 2026-09-08 → 2027-03-02 (+175d) | 2026-09-10 → 2027-03-04 (+175d) |  |  |  |
| RHD4CZ8RA04RD3200 | Supply, lay and Asphaltic base course including Tack Coat (RC2) for 2nd Layer - (ROUND-04)-Z8-RA04-RD | 2027-06-02 → 2027-11-02 (+153d) | 2027-06-05 → 2027-11-04 (+152d) |  |  |  |
| 8076 | **RHD4-02-002-RA04-(RD)-Precast Concrete Curb** | 2027-11-03 → 2028-03-26 (+144d) | 2027-11-07 → 2028-03-29 (+143d) |  |  |  |
| RHD4CZ8RA04RD5100 | Supply and installation Precast Concrete Kerb for Roads - (ROUND-04)-Z8-RA04-RD | 2027-11-03 → 2028-03-26 (+144d) | 2027-11-07 → 2028-03-29 (+143d) |  |  |  |
| 8079 | **RHD4-02-002-RA04-(RD)-Traffic Signage** | 2027-11-08 → 2028-03-30 (+143d) | 2027-11-16 → 2028-04-08 (+144d) |  |  |  |
| RHD4CZ8RA04RD8100 | Installation of Traffic Signage for Road Network - (ROUND-04)-Z8-RA04-RD | 2027-11-08 → 2028-03-30 (+143d) | 2027-11-16 → 2028-04-08 (+144d) |  |  |  |
| 8075 | **RHD4-02-002-RA04-(RD)-Bituminous concrete wearing course including tack coat (RC2)** | 2027-11-08 → 2028-03-30 (+143d) | 2027-11-09 → 2028-04-01 (+144d) |  |  |  |
| RHD4CZ8RA04RD4100 | Supply, lay and compaction Asphaltic wearing course including tack Coat (RC2)for Road Network - (ROUND-04)-Z8-RA04-RD | 2027-11-08 → 2028-03-30 (+143d) | 2027-11-09 → 2028-04-01 (+144d) |  |  | resources Skilled labor [9.37 h]; Unskilled Labor [56.3 h]; Equipment Opreator [140.81 h]; Bobcat [9.37 h]; Roller compactor [9.37 h]; Asphalt Paver [9.37 h]; Rubber Compactor [18.73 h]; MC1/RC2 Sprinkler [9.37 h]; Dump Truck [84.51 h]; Bituminous concrete wearing course, (Grading I - Class A), including tack coat (RC2) [447.64 m3] → Skilled labor [9.37 h]; Unskilled Labor [56.3 h]; Equipment Opreator [140.8 h]; Bobcat [9.37 h]; Roller compactor [9.37 h]; Asphalt Paver [9.37 h]; Rubber Compactor [18.73 h]; MC1/RC2 Sprinkler [9.37 h]; Dump Truck [84.51 h]; Bituminous concrete wearing course, (Grading I - Class A), including tack coat (RC2) [447.64 m3] |
| 8080 | **RHD4-02-002-RA04-(RD)-Speed Table and Wheel Stopper** | 2027-11-10 → 2028-04-02 (+144d) | 2027-11-22 → 2028-04-13 (+143d) |  |  |  |
| RHD4CZ8RA04RD9100 | Installation for Speed Bump for Road Network - (ROUND-04)-Z8-RA04-RD | 2027-11-10 → 2028-04-02 (+144d) | 2027-11-22 → 2028-04-13 (+143d) |  |  | resources Mason [348.06 h]; Skilled labor [115.98 h]; Unskilled Labor [231.96 h]; Equipment Opreator [23.2 h]; Boom Truck [23.2 h]; SPEED TABLE [745.63 m2] → Mason [348.06 h]; Skilled labor [116 h]; Unskilled Labor [232 h]; Equipment Opreator [23.2 h]; Boom Truck [23.2 h]; SPEED TABLE [745.63 m2] |
| 8078 | **RHD4-02-002-RA04-(RD)-Pavement Marking** | 2028-03-29 → 2028-11-05 (+221d) | 2028-04-02 → 2028-11-08 (+220d) |  |  |  |
| RHD4CZ8RA04RD7100 | Pavement Markings for Road Network - (ROUND-04)-Z8-RA04-RD | 2028-03-29 → 2028-11-05 (+221d) | 2028-04-02 → 2028-11-08 (+220d) |  |  |  |
| 8031 | **RHD4-02-002-Z8-RA04-Medium Voltage Network - MV** | 2027-01-26 → 2027-07-06 (+161d) | 2027-02-18 → 2027-07-29 (+161d) |  |  |  |
| 8034 | **RHD4-02-002-RA04-(MV)-Medium Voltage cables 3Cx 500 mm²** | 2027-01-26 → 2027-07-06 (+161d) | 2027-01-27 → 2027-07-07 (+161d) |  |  |  |
| RHD4CZ8RA04MV3400 | Termination of Medium Voltage Cables 3Cx 500 mm² - (ROUND-04)-Z8-RA04-MV | 2027-01-26 → 2027-07-06 (+161d) | 2027-01-27 → 2027-07-07 (+161d) |  |  |  |
| 8035 | **RHD4-02-002-RA04-(MV)-Medium Voltage cables 3Cx 50 mm²** | 2027-01-28 → 2027-07-08 (+161d) | 2027-02-03 → 2027-07-14 (+161d) |  |  |  |
| RHD4CZ8RA04MV3101 | Installation of Medium Voltage Cables 3Cx 50 mm² - (ROUND-04)-Z8-RA04-MV | 2027-01-28 → 2027-07-08 (+161d) | 2027-01-30 → 2027-07-10 (+161d) |  |  |  |
| RHD4CZ8RA04MV3301 | Testing of Medium Voltage Cables 3Cx 50 mm² - (ROUND-04)-Z8-RA04-MV | 2027-01-31 → 2027-07-11 (+161d) | 2027-02-01 → 2027-07-12 (+161d) |  |  |  |
| RHD4CZ8RA04MV3401 | Termination of Medium Voltage Cables 3Cx 50 mm² - (ROUND-04)-Z8-RA04-MV | 2027-02-02 → 2027-07-13 (+161d) | 2027-02-03 → 2027-07-14 (+161d) |  |  |  |
| 8037 | **RHD4-02-002-RA04-(MV)-Unit Substations** | 2027-02-04 → 2027-07-15 (+161d) | 2027-02-18 → 2027-07-29 (+161d) |  |  |  |
| RHD4CZ8RA04MV5100 | Excavation for Unit Substations for Medium Voltage Network - (ROUND-04)-Z8-RA04-MV | 2027-02-04 → 2027-07-15 (+161d) | 2027-02-06 → 2027-07-17 (+161d) |  |  |  |
| RHD4CZ8RA04MV5200 | Concrete Base Placement for Unit Substations for Medium Voltage Network - (ROUND-04)-Z8-RA04-MV | 2027-02-07 → 2027-07-18 (+161d) | 2027-02-08 → 2027-07-19 (+161d) |  |  |  |
| RHD4CZ8RA04MV5300 | Installation for Fences and doors for Medium Voltage Network - (ROUND-04)-Z8-RA04-MV | 2027-02-09 → 2027-07-20 (+161d) | 2027-02-14 → 2027-07-25 (+161d) |  |  |  |
| RHD4CZ8RA04MV5400 | Installation for Unit Substations for Medium Voltage Network - (ROUND-04)-Z8-RA04-MV | 2027-02-15 → 2027-07-26 (+161d) | 2027-02-18 → 2027-07-29 (+161d) |  |  |  |
| 8038 | **RHD4-02-002-Z8-RA04-Low Voltage Network - LV** | 2027-02-20 → 2027-07-31 (+161d) | 2027-03-08 → 2027-08-15 (+160d) |  |  |  |
| 8041 | **RHD4-02-002-RA04-(LV)-Low Voltage cables** | 2027-02-20 → 2027-07-31 (+161d) | 2027-03-01 → 2027-08-08 (+160d) |  |  |  |
| RHD4CZ8RA04LV3100 | Excavation for Low Voltage Cables for Low Voltage Network - (ROUND-04)-Z8-RA04-LV | 2027-02-20 → 2027-07-31 (+161d) | 2027-02-21 → 2027-08-01 (+161d) |  |  |  |
| RHD4CZ8RA04LV3200 | Cable Laying of Low Voltage Cables for Low Voltage Network - (ROUND-04)-Z8-RA04-LV | 2027-02-23 → 2027-08-02 (+160d) | 2027-02-24 → 2027-08-03 (+160d) |  |  | resources Skilled labor [0.87 h]; Unskilled Labor [3.27 h]; Electrician [1.63 h]; Equipment Opreator [2.5 h]; Boom Truck [0.87 h]; Cable Laying Machine [1.63 h]; Cable, Copper 4x185mm2/ CU/XLPE/PVC [13.61 m] → Skilled labor [0.87 h]; Unskilled Labor [3.27 h]; Electrician [1.6 h]; Equipment Opreator [2.5 h]; Boom Truck [0.87 h]; Cable Laying Machine [1.6 h]; Cable, Copper 4x185mm2/ CU/XLPE/PVC [13.61 m] |
| RHD4CZ8RA04LV3300 | Warning tape and Backfill for Low Voltage Cables for Low Voltage Network - (ROUND-04)-Z8-RA04-LV | 2027-02-25 → 2027-08-04 (+160d) | 2027-02-27 → 2027-08-05 (+159d) |  |  | resources Skilled labor [0.87 h]; Unskilled Labor [3.27 h]; Electrician [1.63 h]; Equipment Opreator [0.87 h]; Boom Truck [0.87 h]; Cable, Copper 4x185mm2/ CU/XLPE/PVC [3.4 m] → Skilled labor [0.87 h]; Unskilled Labor [3.27 h]; Electrician [1.6 h]; Equipment Opreator [0.87 h]; Boom Truck [0.87 h]; Cable, Copper 4x185mm2/ CU/XLPE/PVC [3.4 m] |
| RHD4CZ8RA04LV3400 | Testing of Low Voltage Cables for Low Voltage Network - (ROUND-04)-Z8-RA04-LV | 2027-02-28 → 2027-08-07 (+160d) | 2027-03-01 → 2027-08-08 (+160d) |  |  |  |
| 8042 | **RHD4-02-002-RA04-(LV)-Low Voltage Distribution Pillars** | 2027-03-02 → 2027-08-09 (+160d) | 2027-03-08 → 2027-08-15 (+160d) |  |  |  |
| RHD4CZ8RA04LV4100 | Leveling for Distribution Pillars for Low Voltage Network - (ROUND-04)-Z8-RA04-LV | 2027-03-02 → 2027-08-09 (+160d) | 2027-03-03 → 2027-08-10 (+160d) |  |  |  |
| RHD4CZ8RA04LV4200 | Lean Concrete for Distribution Pillars for Low Voltage Network - (ROUND-04)-Z8-RA04-LV | 2027-03-04 → 2027-08-11 (+160d) | 2027-03-06 → 2027-08-12 (+159d) |  |  |  |
| RHD4CZ8RA04LV4300 | Installation of Distribution Pillars for Low Voltage Network - (ROUND-04)-Z8-RA04-LV | 2027-03-07 → 2027-08-14 (+160d) | 2027-03-08 → 2027-08-15 (+160d) |  |  |  |
| 8044 | **RHD4-02-002-Z8-RA04-Street Lighting Network - SL** | 2027-02-25 → 2027-07-19 (+144d) | 2027-04-10 → 2027-09-13 (+156d) |  |  |  |
| 8045 | **RHD4-02-002-RA04-(SL)-Street Lighting duct banks** | 2027-02-25 → 2027-07-19 (+144d) | 2027-03-17 → 2027-08-05 (+141d) |  |  |  |
| RHD4CZ8RA04SL2100 | Excavation of Duct Banks for Street Lighting Network - (ROUND-04)-Z8-RA04-SL | 2027-02-25 → 2027-07-19 (+144d) | 2027-03-01 → 2027-07-22 (+143d) |  |  |  |
| RHD4CZ8RA04SL2200 | Installation of Duct Banks for Street Lighting Network - (ROUND-04)-Z8-RA04-SL | 2027-03-02 → 2027-07-24 (+144d) | 2027-03-07 → 2027-07-28 (+143d) |  |  |  |
| RHD4CZ8RA04SL2300 | Pouring of Duct Banks for Street Lighting Network - (ROUND-04)-Z8-RA04-SL | 2027-03-08 → 2027-07-29 (+143d) | 2027-03-15 → 2027-08-02 (+140d) |  |  |  |
| RHD4CZ8RA04SL2400 | Backfilling of Duct Banks for Street Lighting Network - (ROUND-04)-Z8-RA04-SL | 2027-03-16 → 2027-08-03 (+140d) | 2027-03-17 → 2027-08-05 (+141d) | 2d → 3d |  | resources Skilled labor [27.23 h]; Unskilled Labor [27.23 h]; Equipment Opreator [10.89 h]; Excavator-Poclain [10.89 h]; Road Crossing Duct for Street Lighting cables UPVC (2x?110mm) [4.98 m]; Road Crossing Duct for Street Lighting cables UPVC (4x?110mm) [2.51 m] → Skilled labor [27.2 h]; Unskilled Labor [27.2 h]; Equipment Opreator [10.89 h]; Excavator-Poclain [10.89 h]; Road Crossing Duct for Street Lighting cables UPVC (2x?110mm) [4.98 m]; Road Crossing Duct for Street Lighting cables UPVC (4x?110mm) [2.51 m] |
| 8046 | **RHD4-02-002-RA04-(SL)-Street Lighting Drawpit** | 2027-03-13 → 2027-08-16 (+156d) | 2027-03-16 → 2027-08-19 (+156d) |  |  |  |
| RHD4CZ8RA04SL5100 | Excavation of Drawpit size 600x600x900mm for Street Lighting Network - (ROUND-04)-Z8-RA04-SL | 2027-03-13 → 2027-08-16 (+156d) | 2027-03-14 → 2027-08-17 (+156d) |  |  |  |
| RHD4CZ8RA04SL5200 | Installation of Drawpit size 600x600x900mm for Street Lighting Network - (ROUND-04)-Z8-RA04-SL | 2027-03-15 → 2027-08-18 (+156d) | 2027-03-16 → 2027-08-19 (+156d) |  |  |  |
| 8047 | **RHD4-02-002-RA04-(SL)-Street Lighting cables** | 2027-03-17 → 2027-08-21 (+157d) | 2027-03-29 → 2027-09-01 (+156d) |  |  |  |
| RHD4CZ8RA04SL3100 | Excavation for Street Lighting Cables for Street Lighting Network - (ROUND-04)-Z8-RA04-SL | 2027-03-17 → 2027-08-21 (+157d) | 2027-03-20 → 2027-08-23 (+156d) |  |  | resources Skilled labor [29.95 h]; Unskilled Labor [60.01 h]; Equipment Opreator [60.01 h]; Excavator-Poclain [29.95 h]; Boom Truck [29.95 h]; Cable, Copper 4x16mm2/ CU/XLPE/SWA/PVC + 1x16mm2 CU/PVC [16.21 m]; Cable, Copper 4x10mm2/ CU/XLPE/SWA/PVC + 1x10mm2 CU/PVC [121.52 m] → Skilled labor [29.95 h]; Unskilled Labor [60 h]; Equipment Opreator [60 h]; Excavator-Poclain [29.95 h]; Boom Truck [29.95 h]; Cable, Copper 4x16mm2/ CU/XLPE/SWA/PVC + 1x16mm2 CU/PVC [16.21 m]; Cable, Copper 4x10mm2/ CU/XLPE/SWA/PVC + 1x10mm2 CU/PVC [121.52 m] |
| RHD4CZ8RA04SL3200 | Cable Laying of Street Lighting Cables for Street Lighting Network - (ROUND-04)-Z8-RA04-SL | 2027-03-21 → 2027-08-24 (+156d) | 2027-03-23 → 2027-08-26 (+156d) |  |  | resources Skilled labor [25.05 h]; Unskilled Labor [99.97 h]; Electrician [49.99 h]; Equipment Opreator [75.03 h]; Boom Truck [25.05 h]; Cable Laying Machine [49.99 h]; Cable, Copper 4x16mm2/ CU/XLPE/SWA/PVC + 1x16mm2 CU/PVC [48.62 m]; Cable, Copper 4x10mm2/ CU/XLPE/SWA/PVC + 1x10mm2 CU/PVC [364.56 m] → Skilled labor [25.05 h]; Unskilled Labor [100 h]; Electrician [49.99 h]; Equipment Opreator [75.03 h]; Boom Truck [25.05 h]; Cable Laying Machine [49.99 h]; Cable, Copper 4x16mm2/ CU/XLPE/SWA/PVC + 1x16mm2 CU/PVC [48.62 m]; Cable, Copper 4x10mm2/ CU/XLPE/SWA/PVC + 1x10mm2 CU/PVC [364.56 m] |
| RHD4CZ8RA04SL3300 | Warning tape and Backfill for Street Lighting Cables for Street Lighting Network - (ROUND-04)-Z8-RA04-SL | 2027-03-24 → 2027-08-28 (+157d) | 2027-03-27 → 2027-08-30 (+156d) |  |  | resources Skilled labor [25.05 h]; Unskilled Labor [99.97 h]; Electrician [49.99 h]; Equipment Opreator [25.05 h]; Boom Truck [25.05 h]; Cable, Copper 4x16mm2/ CU/XLPE/SWA/PVC + 1x16mm2 CU/PVC [12.16 m]; Cable, Copper 4x10mm2/ CU/XLPE/SWA/PVC + 1x10mm2 CU/PVC [91.14 m] → Skilled labor [25.05 h]; Unskilled Labor [100 h]; Electrician [49.99 h]; Equipment Opreator [25.05 h]; Boom Truck [25.05 h]; Cable, Copper 4x16mm2/ CU/XLPE/SWA/PVC + 1x16mm2 CU/PVC [12.16 m]; Cable, Copper 4x10mm2/ CU/XLPE/SWA/PVC + 1x10mm2 CU/PVC [91.14 m] |
| RHD4CZ8RA04SL3400 | Testing of Street Lighting Cables for Street Lighting Network - (ROUND-04)-Z8-RA04-SL | 2027-03-28 → 2027-08-31 (+156d) | 2027-03-29 → 2027-09-01 (+156d) |  |  | resources Skilled labor [15.03 h]; Unskilled Labor [60.01 h]; Electrician [29.95 h]; Equipment Opreator [15.03 h]; Boom Truck [15.03 h]; Cable, Copper 4x16mm2/ CU/XLPE/SWA/PVC + 1x16mm2 CU/PVC [4.05 m]; Cable, Copper 4x10mm2/ CU/XLPE/SWA/PVC + 1x10mm2 CU/PVC [30.38 m] → Skilled labor [15.03 h]; Unskilled Labor [60 h]; Electrician [29.95 h]; Equipment Opreator [15.03 h]; Boom Truck [15.03 h]; Cable, Copper 4x16mm2/ CU/XLPE/SWA/PVC + 1x16mm2 CU/PVC [4.05 m]; Cable, Copper 4x10mm2/ CU/XLPE/SWA/PVC + 1x10mm2 CU/PVC [30.38 m] |
| 8048 | **RHD4-02-002-RA04-(SL)-Street Lighting Poles** | 2027-03-30 → 2027-09-02 (+156d) | 2027-04-10 → 2027-09-13 (+156d) |  |  |  |
| RHD4CZ8RA04SL1100 | Excavation for RC Base for Lighting Poles for Street Lighting Network - (ROUND-04)-Z8-RA04-SL | 2027-03-30 → 2027-09-02 (+156d) | 2027-03-31 → 2027-09-04 (+157d) |  |  |  |
| RHD4CZ8RA04SL1200 | Installation for RC Base for Lighting Poles for Street Lighting Network - (ROUND-04)-Z8-RA04-SL | 2027-04-01 → 2027-09-05 (+157d) | 2027-04-03 → 2027-09-06 (+156d) |  |  |  |
| RHD4CZ8RA04SL1300 | Backfill for RC Base for Lighting Poles for Street Lighting Network - (ROUND-04)-Z8-RA04-SL | 2027-04-04 → 2027-09-07 (+156d) | 2027-04-05 → 2027-09-08 (+156d) |  |  |  |
| RHD4CZ8RA04SL1400 | Installation for Lighting Poles for Street Lighting Network - (ROUND-04)-Z8-RA04-SL | 2027-04-06 → 2027-09-09 (+156d) | 2027-04-07 → 2027-09-11 (+157d) |  |  |  |
| RHD4CZ8RA04SL1500 | Luminaire Installation for Lighting Poles for Street Lighting Network - (ROUND-04)-Z8-RA04-SL | 2027-04-08 → 2027-09-12 (+157d) | 2027-04-10 → 2027-09-13 (+156d) |  |  |  |

| ID | Task | Start | Finish | Duration | Complete | Other |
| --- | --- | --- | --- | --- | --- | --- |
| 489 | **RHD4-02-002-Z8-RA04-Telecommunications Network - TC** | 2026-08-20 → 2027-02-14 (+178d) | 2027-05-10 → 2027-10-16 (+159d) |  |  |  |
| 490 | **RHD4-02-002-C081-(TC)-Telecommunications Ducts** | 2027-04-11 → 2027-09-14 (+156d) | 2027-05-10 → 2027-10-16 (+159d) |  |  |  |
| RHD4CZ8RA04TC2100 | Excavation of HDPE Ducts for Telecom Network - (ROUND-04)-Z8-RA04-TC | 2027-04-11 → 2027-09-14 (+156d) | 2027-04-21 → 2027-09-27 (+159d) |  |  | resources Skilled labor [99.97 h]; Unskilled Labor [99.97 h]; Equipment Opreator [199.95 h]; Excavator-Poclain [99.97 h]; Dump Truck [99.97 h]; (6*50mm) HDPE ducts -TC [95.32 m]; (6*50mm+2*32mm) HDPE ducts -TC [38.32 m]; (6*50mm+4*32mm) HDPE ducts -TC [4.53 m]; (2*32mm) HDPE ducts -TC [0.8 m] → Skilled labor [100 h]; Unskilled Labor [100 h]; Equipment Opreator [199.92 h]; Excavator-Poclain [100 h]; Dump Truck [100 h]; (6*50mm) HDPE ducts -TC [95.32 m]; (6*50mm+2*32mm) HDPE ducts -TC [38.32 m]; (6*50mm+4*32mm) HDPE ducts -TC [4.53 m]; (2*32mm) HDPE ducts -TC [0.8 m] |
| RHD4CZ8RA04TC2200 | Installation of HDPE Ducts for Telecom Network - (ROUND-04)-Z8-RA04-TC | 2027-04-22 → 2027-09-27 (+158d) | 2027-05-01 → 2027-10-06 (+158d) | 8d → 8.01d |  | resources Carpenter [15.03 h]; Skilled labor [149.96 h]; Unskilled Labor [149.96 h]; Steel Fixer [15.03 h]; (6*50mm) HDPE ducts -TC [309.79 m]; (6*50mm+2*32mm) HDPE ducts -TC [124.54 m]; (6*50mm+4*32mm) HDPE ducts -TC [14.72 m]; (2*32mm) HDPE ducts -TC [2.6 m] → Carpenter [15.04 h]; Skilled labor [150 h]; Unskilled Labor [150 h]; Steel Fixer [15.04 h]; (6*50mm) HDPE ducts -TC [309.79 m]; (6*50mm+2*32mm) HDPE ducts -TC [124.54 m]; (6*50mm+4*32mm) HDPE ducts -TC [14.72 m]; (2*32mm) HDPE ducts -TC [2.6 m] |
| RHD4CZ8RA04TC2400 | Backfilling of HDPE Ducts for Telecom Network - (ROUND-04)-Z8-RA04-TC | 2027-05-02 → 2027-10-06 (+157d) | 2027-05-10 → 2027-10-16 (+159d) | 8d → 8.01d |  | resources Skilled labor [99.97 h]; Unskilled Labor [99.97 h]; Equipment Opreator [39.97 h]; Excavator-Poclain [39.97 h]; (6*50mm) HDPE ducts -TC [71.49 m]; (6*50mm+2*32mm) HDPE ducts -TC [28.74 m]; (6*50mm+4*32mm) HDPE ducts -TC [3.4 m]; (2*32mm) HDPE ducts -TC [0.6 m] → Skilled labor [100 h]; Unskilled Labor [100 h]; Equipment Opreator [40 h]; Excavator-Poclain [40 h]; (6*50mm) HDPE ducts -TC [71.49 m]; (6*50mm+2*32mm) HDPE ducts -TC [28.74 m]; (6*50mm+4*32mm) HDPE ducts -TC [3.4 m]; (2*32mm) HDPE ducts -TC [0.6 m] |
| 491 | **RHD4-02-002-C081-(TC)-Telecommunications Manholes** | 2027-04-22 → 2027-09-27 (+158d) | 2027-05-01 → 2027-10-05 (+157d) |  |  |  |
| RHD4CZ8RA04TC5100 | Excavation for Manholes for Telecom Network - (ROUND-04)-Z8-RA04-TC | 2027-04-22 → 2027-09-27 (+158d) | 2027-04-26 → 2027-09-30 (+157d) |  |  | resources Skilled labor [13.61 h]; Unskilled Labor [13.61 h]; Equipment Opreator [10.89 h]; Excavator-Poclain [5.45 h]; Dump Truck [5.45 h]; Manhole Type 1 - TC [0.15 nr]; Manhole Type 2 - TC [0.3 nr] → Skilled labor [13.6 h]; Unskilled Labor [13.6 h]; Equipment Opreator [10.88 h]; Excavator-Poclain [5.44 h]; Dump Truck [5.44 h]; Manhole Type 1 - TC [0.15 nr]; Manhole Type 2 - TC [0.3 nr] |
| RHD4CZ8RA04TC5200 | Installation of Manholes for Telecom Network - (ROUND-04)-Z8-RA04-TC | 2027-04-27 → 2027-10-02 (+158d) | 2027-05-01 → 2027-10-05 (+157d) |  |  | resources Skilled labor [13.61 h]; Unskilled Labor [13.61 h]; Equipment Opreator [5.45 h]; Boom Truck [5.45 h]; Manhole Type 1 - TC [0.85 nr]; Manhole Type 2 - TC [1.7 nr] → Skilled labor [13.6 h]; Unskilled Labor [13.6 h]; Equipment Opreator [5.44 h]; Boom Truck [5.44 h]; Manhole Type 1 - TC [0.85 nr]; Manhole Type 2 - TC [1.7 nr] |
| 5411 | **RHD4-02-002-C081-(TC)-Telecomminications Road Crossings** | 2026-08-20 → 2027-02-14 (+178d) | 2026-08-29 → 2027-02-23 (+178d) |  |  |  |
| RHD4CZ8RA04TC3100 | Excavation for Road Crossings for Telecom Network - (ROUND-04)-Z8-RA04-TC | 2026-08-20 → 2027-02-14 (+178d) | 2026-08-22 → 2027-02-15 (+177d) |  |  | resources Skilled labor [9.37 h]; Unskilled Labor [9.37 h]; Equipment Opreator [18.73 h]; Excavator-Poclain [9.37 h]; Dump Truck [9.37 h]; Road crossing ducts, (6*50mm) HDPE -TC [2.8 m] → Skilled labor [9.36 h]; Unskilled Labor [9.36 h]; Equipment Opreator [18.72 h]; Excavator-Poclain [9.36 h]; Dump Truck [9.36 h]; Road crossing ducts, (6*50mm) HDPE -TC [2.8 m] |
| RHD4CZ8RA04TC3200 | Installation of Road Crossings for Telecom Network - (ROUND-04)-Z8-RA04-TC | 2026-08-23 → 2027-02-16 (+177d) | 2026-08-24 → 2027-02-18 (+178d) | 2d → 2.01d |  | resources Carpenter [1.2 h]; Skilled labor [12.52 h]; Unskilled Labor [12.52 h]; Steel Fixer [1.2 h]; Road crossing ducts, (6*50mm) HDPE -TC [2.8 m] → Carpenter [1.2 h]; Skilled labor [12.56 h]; Unskilled Labor [12.56 h]; Steel Fixer [1.2 h]; Road crossing ducts, (6*50mm) HDPE -TC [2.8 m] |
| RHD4CZ8RA04TC3300 | Pouring of Road Crossings for Telecom Network - (ROUND-04)-Z8-RA04-TC | 2026-08-25 → 2027-02-18 (+177d) | 2026-08-26 → 2027-02-21 (+179d) | 2d → 2.01d |  | resources Skilled labor [12.52 h]; Unskilled Labor [12.52 h]; Equipment Opreator [5.01 h]; Concrete Mixer Truck [2.5 h]; Concrete Pump [2.5 h]; Road crossing ducts, (6*50mm) HDPE -TC [18.2 m] → Skilled labor [12.56 h]; Unskilled Labor [12.56 h]; Equipment Opreator [5.04 h]; Concrete Mixer Truck [2.48 h]; Concrete Pump [2.48 h]; Road crossing ducts, (6*50mm) HDPE -TC [18.2 m] |
| RHD4CZ8RA04TC3400 | Backfilling of Road Crossings for Telecom Network - (ROUND-04)-Z8-RA04-TC | 2026-08-27 → 2027-02-21 (+178d) | 2026-08-29 → 2027-02-23 (+178d) |  |  | resources Skilled labor [9.37 h]; Unskilled Labor [9.37 h]; Equipment Opreator [3.7 h]; Excavator-Poclain [3.7 h]; Road crossing ducts, (6*50mm) HDPE -TC [4.2 m] → Skilled labor [9.36 h]; Unskilled Labor [9.36 h]; Equipment Opreator [3.68 h]; Excavator-Poclain [3.68 h]; Road crossing ducts, (6*50mm) HDPE -TC [4.2 m] |
| 8060 | **RHD4-02-002-Z8-RA04-Information and Communication Technologies - ICT** | 2027-04-11 → 2027-09-14 (+156d) | 2027-04-26 → 2027-09-30 (+157d) |  |  |  |
| 8061 | **RHD4-02-002-RA04-(ICT)-Information and Communication Technologies Ducts** | 2027-04-11 → 2027-09-14 (+156d) | 2027-04-26 → 2027-09-30 (+157d) |  |  |  |
| RHD4CZ8RA04ICT2100 | Excavation of HDPE Ducts for ICT Network - (ROUND-04)-Z8-RA04-ICT | 2027-04-11 → 2027-09-14 (+156d) | 2027-04-14 → 2027-09-18 (+157d) |  |  |  |
| RHD4CZ8RA04ICT2200 | Installation of HDPE Ducts for ICT Network - (ROUND-04)-Z8-RA04-ICT | 2027-04-15 → 2027-09-19 (+157d) | 2027-04-21 → 2027-09-26 (+158d) |  |  |  |
| RHD4CZ8RA04ICT2400 | Backfilling of HDPE Ducts for ICT Network - (ROUND-04)-Z8-RA04-ICT | 2027-04-22 → 2027-09-27 (+158d) | 2027-04-26 → 2027-09-30 (+157d) |  |  |  |
| 8064 | **RHD4-02-002-Z8-RA04-Security Network - CCTV** | 2027-04-27 → 2027-10-02 (+158d) | 2027-06-01 → 2027-11-01 (+153d) |  |  |  |
| 8065 | **RHD4-02-002-RA04-(CCTV)-Civil Works** | 2027-04-27 → 2027-10-02 (+158d) | 2027-05-02 → 2027-10-06 (+157d) |  |  |  |
| RHD4CZ8RA04CCTV2100 | Civil Works for Security Network - (ROUND-04)-Z8-RA04-CCTV | 2027-04-27 → 2027-10-02 (+158d) | 2027-05-02 → 2027-10-06 (+157d) |  |  |  |
| 8066 | **RHD4-02-002-RA04-(CCTV)-CCTV Poles** | 2027-05-03 → 2027-10-07 (+157d) | 2027-05-13 → 2027-10-18 (+158d) |  |  |  |
| RHD4CZ8RA04CCTV1100 | Excavation for RC Base for CCTV Poles for Security Network - (ROUND-04)-Z8-RA04-CCTV | 2027-05-03 → 2027-10-07 (+157d) | 2027-05-04 → 2027-10-09 (+158d) |  |  |  |
| RHD4CZ8RA04CCTV1200 | Installation for RC Base for CCTV Poles for Security Network - (ROUND-04)-Z8-RA04-CCTV | 2027-05-05 → 2027-10-10 (+158d) | 2027-05-06 → 2027-10-11 (+158d) |  |  |  |
| RHD4CZ8RA04CCTV1300 | Backfill for RC Base for CCTV Poles for Security Network - (ROUND-04)-Z8-RA04-CCTV | 2027-05-08 → 2027-10-12 (+157d) | 2027-05-09 → 2027-10-13 (+157d) |  |  |  |
| RHD4CZ8RA04CCTV1400 | Installation for CCTV Poles for Security Network - (ROUND-04)-Z8-RA04-CCTV | 2027-05-10 → 2027-10-14 (+157d) | 2027-05-11 → 2027-10-16 (+158d) |  |  |  |
| RHD4CZ8RA04CCTV1500 | Protection post Installation for CCTV Poles for Security Network - (ROUND-04)-Z8-RA04-CCTV | 2027-05-12 → 2027-10-17 (+158d) | 2027-05-13 → 2027-10-18 (+158d) |  |  |  |
| 8067 | **RHD4-02-002-RA04-(CCTV)-Camera** | 2027-05-19 → 2027-10-19 (+153d) | 2027-05-20 → 2027-10-20 (+153d) |  |  |  |
| RHD4CZ8RA04CCTV3100 | Installation for Cameras for Security Network - (ROUND-04)-Z8-RA04-CCTV | 2027-05-19 → 2027-10-19 (+153d) | 2027-05-20 → 2027-10-20 (+153d) |  |  |  |
| 8068 | **RHD4-02-002-RA04-(CCTV)-Power and Infrastructure** | 2027-05-22 → 2027-10-21 (+152d) | 2027-05-23 → 2027-10-23 (+153d) |  |  |  |
| RHD4CZ8RA04CCTV4100 | Installation of Power outlet, UPS and midspan for PTZ Camerafor Cameras for Security Network - (ROUND-04)-Z8-RA04-CCTV | 2027-05-22 → 2027-10-21 (+152d) | 2027-05-23 → 2027-10-23 (+153d) |  |  |  |
| 8070 | **RHD4-02-002-RA04-(CCTV)-CCTV Panels and Components** | 2027-05-24 → 2027-10-24 (+153d) | 2027-06-01 → 2027-11-01 (+153d) |  |  |  |
| RHD4CZ8RA04CCTV6100 | Installation for CCTV Panels for Security Network - (ROUND-04)-Z8-RA04-CCTV | 2027-05-24 → 2027-10-24 (+153d) | 2027-06-01 → 2027-11-01 (+153d) |  |  |  |
| 7325 | **RHD4-02-002-Z8-L04** | 2026-08-20 → 2026-08-25 (+5d) | 2027-08-08 → 2028-01-23 (+168d) |  |  |  |
| 7504 | **RHD4-02-002-Z8-L04-Road Works - RD** | 2026-08-30 → 2027-02-28 (+182d) | 2027-08-08 → 2028-01-23 (+168d) |  |  |  |
| 7505 | **RHD4-02-002-L04-(RD)-Subgrade** | 2026-08-30 → 2027-02-28 (+182d) | 2026-09-03 → 2027-03-06 (+184d) |  |  |  |
| RHD4CZ8L04RD1100 | Supply, lay and compaction subgrade compacted thickness 300 mm for Roads - (RD-L-04)-Z8-L04-RD | 2026-08-30 → 2027-02-28 (+182d) | 2026-09-03 → 2027-03-06 (+184d) | 5d → 6d |  | resources Skilled labor [159.22 h]; Unskilled Labor [318.43 h]; Electrician [159.22 h]; Equipment Opreator [1087.62 h]; Water Truck [52.6 h]; Roller compactor [79.61 h]; Grader [159.22 h]; Dump Truck [796.19 h]; Subgrade [7658.73 m3] → Skilled labor [159.2 h]; Unskilled Labor [318.4 h]; Electrician [159.2 h]; Equipment Opreator [1087.62 h]; Water Truck [52.6 h]; Roller compactor [79.61 h]; Grader [159.2 h]; Dump Truck [796.19 h]; Subgrade [7658.73 m3] |
| 7506 | **RHD4-02-002-L04-(RD)-Aggregate Base Course** | 2026-09-05 → 2027-03-07 (+183d) | 2026-09-09 → 2027-03-15 (+187d) |  |  |  |
| RHD4CZ8L04RD2100 | Supply, lay and compaction Aggregate base course compacted thickness 300 mmfor Roads - (RD-L-04)-Z8-L04-RD | 2026-09-05 → 2027-03-07 (+183d) | 2026-09-09 → 2027-03-15 (+187d) |  |  |  |
| 7507 | **RHD4-02-002-L04-(RD)-Bituminous base course Two Layers, including (MC1)&(RC2)** | 2026-09-10 → 2027-03-16 (+187d) | 2027-07-11 → 2027-12-20 (+162d) |  |  |  |
| RHD4CZ8L04RD3100 | Supply, lay and Asphaltic base course including Prime Coat (MC1) for 1st Layer - (RD-L-04)-Z8-L04-RD | 2026-09-10 → 2027-03-16 (+187d) | 2026-09-12 → 2027-03-17 (+186d) |  |  |  |
| RHD4CZ8L04RD3200 | Supply, lay and Asphaltic base course including Tack Coat (RC2) for 2nd Layer - (RD-L-04)-Z8-L04-RD | 2027-07-10 → 2027-12-19 (+162d) | 2027-07-11 → 2027-12-20 (+162d) |  |  |  |
| 7509 | **RHD4-02-002-L04-(RD)-Precast Concrete Curb** | 2027-07-12 → 2027-12-21 (+162d) | 2027-07-18 → 2027-12-27 (+162d) |  |  |  |
| RHD4CZ8L04RD5100 | Supply and installation Precast Concrete Kerb for Roads - (RD-L-04)-Z8-L04-RD | 2027-07-12 → 2027-12-21 (+162d) | 2027-07-18 → 2027-12-27 (+162d) |  |  |  |
| 7512 | **RHD4-02-002-L04-(RD)-Traffic Signage** | 2027-07-19 → 2027-12-28 (+162d) | 2027-07-25 → 2028-01-03 (+162d) |  |  |  |
| RHD4CZ8L04RD8100 | Installation of Traffic Signage for Road Network - (RD-L-04)-Z8-L04-RD | 2027-07-19 → 2027-12-28 (+162d) | 2027-07-25 → 2028-01-03 (+162d) |  |  |  |
| 7510 | **RHD4-02-002-L04-(RD)-Precast Interlocking Block Pavers** | 2027-07-26 → 2028-01-04 (+162d) | 2027-07-31 → 2028-01-15 (+168d) |  |  |  |
| RHD4CZ8L04RD6100 | Interlocking block pavers for sidewalk-footpath for Side walks and Parking areas - (RD-L-04)-Z8-L04-RD | 2027-07-26 → 2028-01-04 (+162d) | 2027-07-31 → 2028-01-15 (+168d) | 5d → 10d |  |  |
| 7508 | **RHD4-02-002-L04-(RD)-Bituminous concrete wearing course including tack coat (RC2)** | 2027-08-01 → 2028-01-16 (+168d) | 2027-08-02 → 2028-01-17 (+168d) |  |  |  |
| RHD4CZ8L04RD4100 | Supply, lay and compaction Asphaltic wearing course including tack Coat (RC2)for Road Network - (RD-L-04)-Z8-L04-RD | 2027-08-01 → 2028-01-16 (+168d) | 2027-08-02 → 2028-01-17 (+168d) |  |  |  |
| 7511 | **RHD4-02-002-L04-(RD)-Pavement Marking** | 2027-08-03 → 2028-01-18 (+168d) | 2027-08-08 → 2028-01-23 (+168d) |  |  |  |
| RHD4CZ8L04RD7100 | Pavement Markings for Road Network - (RD-L-04)-Z8-L04-RD | 2027-08-03 → 2028-01-18 (+168d) | 2027-08-08 → 2028-01-23 (+168d) |  |  | resources Skilled labor [50.42 h]; Unskilled Labor [100.95 h]; Equipment Opreator [50.42 h]; Road Marking Machine [50.42 h]; Retroreflective Thermoplastic White Traffic Markings [204.52 m2]; Retroreflective Thermoplastic Yellow, Traffic Markings [190.85 m2]; Retroreflective raised pavement markers (cat eyes) [787 nr] → Skilled labor [50.4 h]; Unskilled Labor [100.95 h]; Equipment Opreator [50.4 h]; Road Marking Machine [50.4 h]; Retroreflective Thermoplastic White Traffic Markings [204.52 m2]; Retroreflective Thermoplastic Yellow, Traffic Markings [190.85 m2]; Retroreflective raised pavement markers (cat eyes) [787 nr] |
| 7329 | **RHD4-02-002-Z8-L04-Storm Network - ST** | 2026-10-17 → 2026-08-25 (-53d) | 2027-01-12 → 2027-06-21 (+160d) |  |  |  |
| 7348 | **RHD4-02-002-L04-(ST)-MH Works - 2000 mm diameter** | 2026-11-30 → 2026-09-19 (-72d) | 2026-12-10 → 2027-05-03 (+144d) |  |  |  |
| RHD4CZ8L04ST3102 | Excavation and PC Blinding works for MH 2000 mm - (RD-L-04)-Z8-L04-ST | 2026-11-30 → 2026-09-19 A (-72d) | 2026-12-01 → 2026-09-20 A (-72d) |  | 0% → 100% |  |
| RHD4CZ8L04ST3202 | Installation of Base for MH 2000 mm - (RD-L-04)-Z8-L04-ST | 2026-12-02 → 2027-04-25 (+144d) | 2026-12-03 → 2027-04-26 (+144d) |  |  |  |
| RHD4CZ8L04ST3302 | MH Ring and C.Slab works and Backfilling works for MH 2000 mm - (RD-L-04)-Z8-L04-ST | 2026-12-05 → 2027-04-27 (+143d) | 2026-12-06 → 2027-04-28 (+143d) |  |  |  |
| RHD4CZ8L04ST3402 | Steel Cover for MH 2000 mm - (RD-L-04)-Z8-L04-ST | 2026-12-07 → 2027-04-29 (+143d) | 2026-12-08 → 2027-05-01 (+144d) |  |  |  |
| RHD4CZ8L04ST3502 | Finishing, Benching, Testing works for MH 2000 mm - (RD-L-04)-Z8-L04-ST | 2026-12-09 → 2027-05-02 (+144d) | 2026-12-10 → 2027-05-03 (+144d) |  |  |  |
| 1844 | **RHD4-02-002-L04-(ST)-GRP Pipes - 400 mm diameter** | 2026-10-31 → 2026-09-15 (-46d) | 2026-11-10 → 2027-03-18 (+128d) |  |  |  |
| RHD4CZ8L04ST1100 | Excavation works for GRP Pipe Line 400 mm - (RD-L-04)-Z8-L04-ST | 2026-10-31 → 2026-09-15 A (-46d) | 2026-11-01 → 2026-09-16 A (-46d) |  | 0% → 100% |  |
| RHD4CZ8L04ST1200 | Bedding works for GRP Pipe Line 400 mm - (RD-L-04)-Z8-L04-ST | 2026-11-02 → 2026-09-19 A (-44d) | 2026-11-03 → 2026-09-20 A (-44d) |  | 0% → 100% | resources Skilled labor [2.4 h]; Unskilled Labor [4.79 h]; Equipment Opreator [4.79 h]; Excavator-Poclain [2.4 h]; Dump Truck [2.4 h]; GRP (400mm Diameter) - ST - Depth less than 1.5 m [3.32 m] → Skilled labor [2.4 h]; Unskilled Labor [4.8 h]; Equipment Opreator [4.8 h]; Excavator-Poclain [2.4 h]; Dump Truck [2.4 h]; GRP (400mm Diameter) - ST - Depth less than 1.5 m [3.32 m] |
| RHD4CZ8L04ST1300 | Installing for GRP Pipe Line 400 mm - (RD-L-04)-Z8-L04-ST | 2026-11-04 → 2026-09-20 A (-45d) | 2026-11-05 → 2026-09-21 A (-45d) |  | 0% → 100% | resources Unskilled Labor [9.69 h]; Plumber [4.79 h]; GRP (400mm Diameter) - ST - Depth less than 1.5 m [29.91 m] → Unskilled Labor [9.69 h]; Plumber [4.8 h]; GRP (400mm Diameter) - ST - Depth less than 1.5 m [29.91 m] |
| RHD4CZ8L04ST1400 | Primary Test for GRP Pipe Line 400 mm - (RD-L-04)-Z8-L04-ST | 2026-11-07 → 2027-03-15 (+128d) | 2026-11-08 → 2027-03-16 (+128d) |  |  |  |
| RHD4CZ8L04ST1500 | Backfilling and warning tape works for GRP Pipe Line 400 mm - (RD-L-04)-Z8-L04-ST | 2026-11-09 → 2027-03-17 (+128d) | 2026-11-10 → 2027-03-18 (+128d) |  |  | resources Skilled labor [3.59 h]; Unskilled Labor [7.19 h]; Equipment Opreator [7.19 h]; Excavator-Poclain [3.59 h]; Dump Truck [3.59 h]; GRP (400mm Diameter) - ST - Depth less than 1.5 m [13.29 m] → Skilled labor [3.59 h]; Unskilled Labor [7.2 h]; Equipment Opreator [7.2 h]; Excavator-Poclain [3.59 h]; Dump Truck [3.59 h]; GRP (400mm Diameter) - ST - Depth less than 1.5 m [13.29 m] |
| 1852 | **RHD4-02-002-L04-(ST)-GRP Pipes - 1200 mm diameter** | 2026-10-17 → 2026-08-25 (-53d) | 2026-10-27 → 2027-03-14 (+138d) |  |  |  |
| RHD4CZ8L04ST1108 | Excavation works for GRP Pipe Line 1200 mm - (RD-L-04)-Z8-L04-ST | 2026-10-17 → 2026-08-25 A (-53d) | 2026-10-18 → 2026-09-19 A (-29d) |  | 0% → 100% |  |
| RHD4CZ8L04ST1208 | Bedding works for GRP Pipe Line 1200 mm - (RD-L-04)-Z8-L04-ST | 2026-10-19 → 2027-03-02 (+134d) | 2026-10-20 → 2027-03-03 (+134d) |  |  |  |
| RHD4CZ8L04ST1308 | Installing for GRP Pipe Line 1200 mm - (RD-L-04)-Z8-L04-ST | 2026-10-21 → 2027-03-04 (+134d) | 2026-10-22 → 2027-03-06 (+135d) |  |  |  |
| RHD4CZ8L04ST1408 | Primary Test for GRP Pipe Line 1200 mm - (RD-L-04)-Z8-L04-ST | 2026-10-24 → 2027-03-07 (+134d) | 2026-10-25 → 2027-03-08 (+134d) |  |  |  |

| ID | Task | Start | Finish | Complete | Other |
| --- | --- | --- | --- | --- | --- |
| RHD4CZ8L04ST1508 | Backfilling and warning tape works for GRP Pipe Line 1200 mm - (RD-L-04)-Z8-L04-ST | 2026-10-26 → 2027-03-13 (+138d) | 2026-10-27 → 2027-03-14 (+138d) |  |  |
| 2414 | **RHD4-02-002-L04-(ST)-GRP Pipes - 600 mm diameter** | 2026-10-26 → 2026-09-15 (-41d) | 2026-11-05 → 2027-03-14 (+129d) |  |  |
| RHD4CZ8L04ST1102 | Excavation works for GRP Pipe Line 600 mm - (RD-L-04)-Z8-L04-ST | 2026-10-26 → 2026-09-15 A (-41d) | 2026-10-27 → 2026-09-16 A (-41d) | 0% → 100% |  |
| RHD4CZ8L04ST1202 | Bedding works for GRP Pipe Line 600 mm - (RD-L-04)-Z8-L04-ST | 2026-10-28 → 2026-09-17 A (-41d) | 2026-10-29 → 2027-03-03 (+125d) | 0% → 65% |  |
| RHD4CZ8L04ST1302 | Installing for GRP Pipe Line 600 mm - (RD-L-04)-Z8-L04-ST | 2026-10-31 → 2026-09-21 A (-40d) | 2026-11-01 → 2027-03-06 (+125d) | 0% → 34% |  |
| RHD4CZ8L04ST1402 | Primary Test for GRP Pipe Line 600 mm - (RD-L-04)-Z8-L04-ST | 2026-11-02 → 2027-03-07 (+125d) | 2026-11-03 → 2027-03-08 (+125d) |  |  |
| RHD4CZ8L04ST1502 | Backfilling and warning tape works for GRP Pipe Line 600 mm - (RD-L-04)-Z8-L04-ST | 2026-11-04 → 2027-03-13 (+129d) | 2026-11-05 → 2027-03-14 (+129d) |  | resources Skilled labor [11.22 h]; Unskilled Labor [22.43 h]; Equipment Opreator [22.43 h]; Excavator-Poclain [11.22 h]; Dump Truck [11.22 h]; GRP (600mm Diameter) - ST - Depth less than 1.5 m [41.21 m]; GRP (600mm Diameter) - ST - Depth: 1.51m - 2.5m → Skilled labor [11.2 h]; Unskilled Labor [22.4 h]; Equipment Opreator [22.4 h]; Excavator-Poclain [11.2 h]; Dump Truck [11.2 h]; GRP (600mm Diameter) - ST - Depth less than 1.5 m [41.21 m]; GRP (600mm Diameter) - ST - Depth: 1.51m - 2.5m |
| 3752 | **RHD4-02-002-L04-(ST)-MH Works - 1200 mm diameter** | 2026-12-09 → 2026-09-19 (-81d) | 2026-12-31 → 2027-06-09 (+160d) |  |  |
| RHD4CZ8L04ST3100 | Excavation and PC Blinding works for MH 1200 mm - (RD-L-04)-Z8-L04-ST | 2026-12-09 → 2026-09-19 A (-81d) | 2026-12-13 → 2026-09-22 A (-82d) | 0% → 100% |  |
| RHD4CZ8L04ST3200 | Installation of Base for MH 1200 mm - (RD-L-04)-Z8-L04-ST | 2026-12-14 → 2027-05-23 (+160d) | 2026-12-17 → 2027-05-26 (+160d) |  |  |
| RHD4CZ8L04ST3300 | MH Ring and C.Slab works and Backfilling works for MH 1200 mm - (RD-L-04)-Z8-L04-ST | 2026-12-19 → 2027-05-27 (+159d) | 2026-12-22 → 2027-05-31 (+160d) |  |  |
| RHD4CZ8L04ST3400 | Steel Cover for MH 1200 mm - (RD-L-04)-Z8-L04-ST | 2026-12-23 → 2027-06-01 (+160d) | 2026-12-27 → 2027-06-05 (+160d) |  |  |
| RHD4CZ8L04ST3500 | Finishing, Benching, Testing works for MH 1200 mm - (RD-L-04)-Z8-L04-ST | 2026-12-28 → 2027-06-06 (+160d) | 2026-12-31 → 2027-06-09 (+160d) |  |  |
| 3739 | **RHD4-02-002-L04-(ST)-GRP Pipes - 700 mm diameter** | 2026-10-24 → 2026-09-15 (-39d) | 2026-11-03 → 2027-03-14 (+131d) |  |  |
| RHD4CZ8L04ST1103 | Excavation works for GRP Pipe Line 700 mm - (RD-L-04)-Z8-L04-ST | 2026-10-24 → 2026-09-15 A (-39d) | 2026-10-25 → 2026-09-16 A (-39d) | 0% → 100% | resources Skilled labor [11.22 h]; Unskilled Labor [11.22 h]; Equipment Opreator [13.4 h]; Excavator-Poclain [11.22 h]; Dump Truck [2.29 h]; GRP (700mm Diameter) - ST - Depth less than 1.5 m [20.56 m]; GRP (700mm Diameter) - ST - Depth: 1.51m - 2.5m → Skilled labor [11.2 h]; Unskilled Labor [11.2 h]; Equipment Opreator [13.4 h]; Excavator-Poclain [11.2 h]; Dump Truck [2.29 h]; GRP (700mm Diameter) - ST - Depth less than 1.5 m [20.56 m]; GRP (700mm Diameter) - ST - Depth: 1.51m - 2.5m |
| RHD4CZ8L04ST1203 | Bedding works for GRP Pipe Line 700 mm - (RD-L-04)-Z8-L04-ST | 2026-10-26 → 2026-09-19 A (-37d) | 2026-10-27 → 2027-03-03 (+127d) | 0% → 30% | resources Skilled labor [11.22 h]; Unskilled Labor [22.43 h]; Equipment Opreator [22.43 h]; Excavator-Poclain [11.22 h]; Dump Truck [11.22 h]; GRP (700mm Diameter) - ST - Depth less than 1.5 m [10.28 m]; GRP (700mm Diameter) - ST - Depth: 1.51m - 2.5m → Skilled labor [11.2 h]; Unskilled Labor [22.4 h]; Equipment Opreator [22.4 h]; Excavator-Poclain [11.2 h]; Dump Truck [11.2 h]; GRP (700mm Diameter) - ST - Depth less than 1.5 m [10.28 m]; GRP (700mm Diameter) - ST - Depth: 1.51m - 2.5m |
| RHD4CZ8L04ST1303 | Installing for GRP Pipe Line 700 mm - (RD-L-04)-Z8-L04-ST | 2026-10-28 → 2026-09-20 A (-38d) | 2026-10-29 → 2027-03-06 (+128d) | 0% → 30% | resources Unskilled Labor [11.22 h]; Plumber [5.55 h]; GRP (700mm Diameter) - ST - Depth less than 1.5 m [92.52 m]; GRP (700mm Diameter) - ST - Depth: 1.51m - 2.5m → Unskilled Labor [11.2 h]; Plumber [5.55 h]; GRP (700mm Diameter) - ST - Depth less than 1.5 m [92.52 m]; GRP (700mm Diameter) - ST - Depth: 1.51m - 2.5m |
| RHD4CZ8L04ST1403 | Primary Test for GRP Pipe Line 700 mm - (RD-L-04)-Z8-L04-ST | 2026-10-31 → 2027-03-07 (+127d) | 2026-11-01 → 2027-03-08 (+127d) |  |  |
| RHD4CZ8L04ST1503 | Backfilling and warning tape works for GRP Pipe Line 700 mm - (RD-L-04)-Z8-L04-ST | 2026-11-02 → 2027-03-13 (+131d) | 2026-11-03 → 2027-03-14 (+131d) |  | resources Skilled labor [11.22 h]; Unskilled Labor [22.43 h]; Equipment Opreator [22.43 h]; Excavator-Poclain [11.22 h]; Dump Truck [11.22 h]; GRP (700mm Diameter) - ST - Depth less than 1.5 m [41.12 m]; GRP (700mm Diameter) - ST - Depth: 1.51m - 2.5m → Skilled labor [11.2 h]; Unskilled Labor [22.4 h]; Equipment Opreator [22.4 h]; Excavator-Poclain [11.2 h]; Dump Truck [11.2 h]; GRP (700mm Diameter) - ST - Depth less than 1.5 m [41.12 m]; GRP (700mm Diameter) - ST - Depth: 1.51m - 2.5m |
| 3737 | **RHD4-02-002-L04-(ST)-GRP Pipes - 500 mm diameter** | 2026-10-28 → 2026-09-15 (-43d) | 2026-11-08 → 2027-03-16 (+128d) |  |  |
| RHD4CZ8L04ST1101 | Excavation works for GRP Pipe Line 500 mm - (RD-L-04)-Z8-L04-ST | 2026-10-28 → 2026-09-15 A (-43d) | 2026-10-29 → 2026-09-16 A (-43d) | 0% → 100% |  |
| RHD4CZ8L04ST1201 | Bedding works for GRP Pipe Line 500 mm - (RD-L-04)-Z8-L04-ST | 2026-10-31 → 2027-03-02 (+122d) | 2026-11-01 → 2027-03-03 (+122d) |  |  |
| RHD4CZ8L04ST1301 | Installing for GRP Pipe Line 500 mm - (RD-L-04)-Z8-L04-ST | 2026-11-02 → 2027-03-07 (+125d) | 2026-11-03 → 2027-03-08 (+125d) |  |  |
| RHD4CZ8L04ST1401 | Primary Test for GRP Pipe Line 500 mm - (RD-L-04)-Z8-L04-ST | 2026-11-04 → 2027-03-13 (+129d) | 2026-11-05 → 2027-03-14 (+129d) |  |  |
| RHD4CZ8L04ST1501 | Backfilling and warning tape works for GRP Pipe Line 500 mm - (RD-L-04)-Z8-L04-ST | 2026-11-07 → 2027-03-15 (+128d) | 2026-11-08 → 2027-03-16 (+128d) |  | resources Skilled labor [6.43 h]; Unskilled Labor [12.85 h]; Equipment Opreator [12.85 h]; Excavator-Poclain [6.43 h]; Dump Truck [6.43 h]; GRP (500mm Diameter) - ST - Depth less than 1.5 m [23.56 m] → Skilled labor [6.4 h]; Unskilled Labor [12.85 h]; Equipment Opreator [12.85 h]; Excavator-Poclain [6.4 h]; Dump Truck [6.4 h]; GRP (500mm Diameter) - ST - Depth less than 1.5 m [23.56 m] |
| 7347 | **RHD4-02-002-L04-(ST)-MH Works - 1500 mm diameter** | 2026-12-02 → 2026-09-19 (-74d) | 2027-01-12 → 2027-06-21 (+160d) |  |  |
| RHD4CZ8L04ST3101 | Excavation and PC Blinding works for MH 1500 mm - (RD-L-04)-Z8-L04-ST | 2026-12-02 → 2026-09-19 A (-74d) | 2026-12-08 → 2026-09-23 A (-76d) | 0% → 100% |  |
| RHD4CZ8L04ST3201 | Installation of Base for MH 1500 mm - (RD-L-04)-Z8-L04-ST | 2026-12-09 → 2026-09-21 A (-79d) | 2026-12-15 → 2027-04-27 (+133d) | 0% → 75% |  |
| RHD4CZ8L04ST3301 | MH Ring and C.Slab works and Backfilling works for MH 1500 mm - (RD-L-04)-Z8-L04-ST | 2026-12-16 → 2027-04-28 (+133d) | 2026-12-22 → 2027-05-04 (+133d) |  |  |
| RHD4CZ8L04ST3401 | Steel Cover for MH 1500 mm - (RD-L-04)-Z8-L04-ST | 2026-12-23 → 2027-05-05 (+133d) | 2026-12-27 → 2027-05-09 (+133d) |  |  |
| RHD4CZ8L04ST3501 | Finishing, Benching, Testing works for MH 1500 mm - (RD-L-04)-Z8-L04-ST | 2027-01-06 → 2027-06-15 (+160d) | 2027-01-12 → 2027-06-21 (+160d) |  |  |
| 7335 | **RHD4-02-002-L04-(ST)-GRP Pipes - 900 mm diameter** | 2026-10-19 → 2026-08-27 (-53d) | 2026-10-29 → 2027-03-03 (+125d) |  |  |
| RHD4CZ8L04ST1105 | Excavation works for GRP Pipe Line 900 mm - (RD-L-04)-Z8-L04-ST | 2026-10-19 → 2026-08-27 A (-53d) | 2026-10-20 → 2026-08-29 A (-52d) | 0% → 100% | resources Skilled labor [7.19 h]; Unskilled Labor [7.19 h]; Equipment Opreator [8.6 h]; Excavator-Poclain [7.19 h]; Dump Truck [1.42 h]; GRP (900mm Diameter) - ST - Depth less than 1.5 m [7.4 m]; GRP (900mm Diameter) - ST - Depth: 1.51m - 2.5m [8.74 m] → Skilled labor [7.2 h]; Unskilled Labor [7.2 h]; Equipment Opreator [8.6 h]; Excavator-Poclain [7.2 h]; Dump Truck [1.42 h]; GRP (900mm Diameter) - ST - Depth less than 1.5 m [7.4 m]; GRP (900mm Diameter) - ST - Depth: 1.51m - 2.5m [8.74 m] |
| RHD4CZ8L04ST1205 | Bedding works for GRP Pipe Line 900 mm - (RD-L-04)-Z8-L04-ST | 2026-10-21 → 2026-09-15 A (-36d) | 2026-10-22 → 2026-09-16 A (-36d) | 0% → 100% | resources Skilled labor [7.19 h]; Unskilled Labor [14.38 h]; Equipment Opreator [14.38 h]; Excavator-Poclain [7.19 h]; Dump Truck [7.19 h]; GRP (900mm Diameter) - ST - Depth less than 1.5 m [3.7 m]; GRP (900mm Diameter) - ST - Depth: 1.51m - 2.5m [2.91 m] → Skilled labor [7.2 h]; Unskilled Labor [14.4 h]; Equipment Opreator [14.4 h]; Excavator-Poclain [7.2 h]; Dump Truck [7.2 h]; GRP (900mm Diameter) - ST - Depth less than 1.5 m [3.7 m]; GRP (900mm Diameter) - ST - Depth: 1.51m - 2.5m [2.91 m] |
| RHD4CZ8L04ST1305 | Installing for GRP Pipe Line 900 mm - (RD-L-04)-Z8-L04-ST | 2026-10-24 → 2026-09-16 A (-38d) | 2026-10-25 → 2026-09-17 A (-38d) | 0% → 100% | resources Unskilled Labor [9.58 h]; Plumber [4.79 h]; GRP (900mm Diameter) - ST - Depth less than 1.5 m [33.3 m]; GRP (900mm Diameter) - ST - Depth: 1.51m - 2.5m [23.3 m] → Unskilled Labor [9.6 h]; Plumber [4.8 h]; GRP (900mm Diameter) - ST - Depth less than 1.5 m [33.3 m]; GRP (900mm Diameter) - ST - Depth: 1.51m - 2.5m [23.3 m] |
| RHD4CZ8L04ST1505 | Backfilling and warning tape works for GRP Pipe Line 900 mm - (RD-L-04)-Z8-L04-ST | 2026-10-28 → 2026-09-17 A (-41d) | 2026-10-29 → 2026-09-19 A (-40d) | 0% → 100% | resources Skilled labor [7.19 h]; Unskilled Labor [14.38 h]; Equipment Opreator [14.38 h]; Excavator-Poclain [7.19 h]; Dump Truck [7.19 h]; GRP (900mm Diameter) - ST - Depth less than 1.5 m [14.8 m]; GRP (900mm Diameter) - ST - Depth: 1.51m - 2.5m [11.65 m] → Skilled labor [7.2 h]; Unskilled Labor [14.4 h]; Equipment Opreator [14.4 h]; Excavator-Poclain [7.2 h]; Dump Truck [7.2 h]; GRP (900mm Diameter) - ST - Depth less than 1.5 m [14.8 m]; GRP (900mm Diameter) - ST - Depth: 1.51m - 2.5m [11.65 m] |
| RHD4CZ8L04ST1405 | Primary Test for GRP Pipe Line 900 mm - (RD-L-04)-Z8-L04-ST | 2026-10-26 → 2027-03-02 (+127d) | 2026-10-27 → 2027-03-03 (+127d) |  |  |
| 7334 | **RHD4-02-002-L04-(ST)-GRP Pipes - 800 mm diameter** | 2026-10-21 → 2026-09-15 (-36d) | 2026-11-01 → 2027-03-06 (+125d) |  |  |
| RHD4CZ8L04ST1104 | Excavation works for GRP Pipe Line 800 mm - (RD-L-04)-Z8-L04-ST | 2026-10-21 → 2026-09-15 A (-36d) | 2026-10-22 → 2026-09-16 A (-36d) | 0% → 100% |  |
| RHD4CZ8L04ST1204 | Bedding works for GRP Pipe Line 800 mm - (RD-L-04)-Z8-L04-ST | 2026-10-24 → 2026-09-16 A (-38d) | 2026-10-25 → 2026-09-17 A (-38d) | 0% → 100% |  |
| RHD4CZ8L04ST1304 | Installing for GRP Pipe Line 800 mm - (RD-L-04)-Z8-L04-ST | 2026-10-26 → 2026-09-17 A (-39d) | 2026-10-27 → 2026-09-19 A (-38d) | 0% → 100% |  |
| RHD4CZ8L04ST1404 | Primary Test for GRP Pipe Line 800 mm - (RD-L-04)-Z8-L04-ST | 2026-10-28 → 2027-03-02 (+125d) | 2026-10-29 → 2027-03-03 (+125d) |  |  |
| RHD4CZ8L04ST1504 | Backfilling and warning tape works for GRP Pipe Line 800 mm - (RD-L-04)-Z8-L04-ST | 2026-10-31 → 2027-03-04 (+124d) | 2026-11-01 → 2027-03-06 (+125d) |  |  |
| 7344 | **RHD4-02-002-L04-(ST)-UPVC Pipes - 300 mm diameter** | 2026-11-02 → 2027-03-15 (+133d) | 2027-01-05 → 2027-06-14 (+160d) |  |  |
| RHD4CZ8L04ST2100 | Excavation works for UPVC Pipe Line 300 mm - (RD-L-04)-Z8-L04-ST | 2026-11-02 → 2027-03-15 (+133d) | 2026-11-03 → 2027-03-16 (+133d) |  |  |
| RHD4CZ8L04ST2200 | Bedding works for UPVC Pipe Line 300 mm - (RD-L-04)-Z8-L04-ST | 2026-11-04 → 2027-03-17 (+133d) | 2026-11-05 → 2027-03-18 (+133d) |  |  |
| RHD4CZ8L04ST2300 | Installing for UPVC Pipe Line 300 mm - (RD-L-04)-Z8-L04-ST | 2026-12-30 → 2027-06-08 (+160d) | 2026-12-31 → 2027-06-09 (+160d) |  |  |
| RHD4CZ8L04ST2400 | Primary Test for UPVC Pipe Line 300 mm - (RD-L-04)-Z8-L04-ST | 2027-01-02 → 2027-06-10 (+159d) | 2027-01-03 → 2027-06-12 (+160d) |  |  |
| RHD4CZ8L04ST2500 | Backfilling and warning tape works for UPVC Pipe Line 300 mm - (RD-L-04)-Z8-L04-ST | 2027-01-04 → 2027-06-13 (+160d) | 2027-01-05 → 2027-06-14 (+160d) |  |  |
| 7352 | **RHD4-02-002-L04-(ST)-Concrete Encasement** | 2026-12-30 → 2027-06-08 (+160d) | 2026-12-31 → 2027-06-09 (+160d) |  |  |
| RHD4CZ8L04ST6100 | Pipe Encasement for Storm Pipelines - (RD-L-04)-Z8-L04-ST | 2026-12-30 → 2027-06-08 (+160d) | 2026-12-31 → 2027-06-09 (+160d) |  |  |
| 7353 | **RHD4-02-002-Z8-L04-Catch Basin - ST** | 2026-12-23 → 2027-06-01 (+160d) | 2027-01-30 → 2027-07-29 (+180d) |  |  |
| 7354 | **RHD4-02-002-L04-(ST)-Single Catch Basin Works** | 2026-12-23 → 2027-06-01 (+160d) | 2027-01-30 → 2027-07-29 (+180d) |  |  |
| RHD4CZ8L04ST7100 | Excavation works for Single Catch Basin - (RD-L-04)-Z8-L04-ST | 2026-12-23 → 2027-06-01 (+160d) | 2026-12-24 → 2027-06-02 (+160d) |  |  |
| RHD4CZ8L04ST7200 | PC Blinding, Installation and Pipe connection for Single Catch Basin - (RD-L-04)-Z8-L04-ST | 2026-12-26 → 2027-06-03 (+159d) | 2026-12-27 → 2027-06-05 (+160d) |  |  |
| RHD4CZ8L04ST7300 | Rings & C.Slab & Final Backfill for Single Catch Basin - (RD-L-04)-Z8-L04-ST | 2026-12-28 → 2027-06-06 (+160d) | 2026-12-29 → 2027-06-07 (+160d) |  |  |
| RHD4CZ8L04ST7400 | Steel Cover for Single Catch Basin - (RD-L-04)-Z8-L04-ST | 2027-01-25 → 2027-07-25 (+181d) | 2027-01-26 → 2027-07-26 (+181d) |  |  |
| RHD4CZ8L04ST7500 | Finishing and Insulation works for Single Catch Basin - (RD-L-04)-Z8-L04-ST | 2027-01-27 → 2027-07-27 (+181d) | 2027-01-30 → 2027-07-29 (+180d) |  |  |
| 6409 | **RHD4-02-002-L016-(ST)-Double Catch Basin Works** | 2026-12-26 → 2027-06-03 (+159d) | 2027-01-05 → 2027-06-14 (+160d) |  |  |
| RHD4CZ8L04ST8100 | Excavation works for Double Catch Basin - (RD-L-16)-Z5-L016-ST | 2026-12-26 → 2027-06-03 (+159d) | 2026-12-27 → 2027-06-05 (+160d) |  |  |
| RHD4CZ8L04ST8200 | PC Blinding, Installation and Pipe connection for Double Catch Basin - (RD-L-16)-Z5-L016-ST | 2026-12-28 → 2027-06-06 (+160d) | 2026-12-29 → 2027-06-07 (+160d) |  |  |
| RHD4CZ8L04ST8300 | Rings & C.Slab & Final Backfillfor Double Catch Basin - (RD-L-16)-Z5-L016-ST | 2026-12-30 → 2027-06-08 (+160d) | 2026-12-31 → 2027-06-09 (+160d) |  |  |
| RHD4CZ8L04ST8400 | Steel Cover for Double Catch Basin - (RD-L-16)-Z5-L016-ST | 2027-01-02 → 2027-06-10 (+159d) | 2027-01-03 → 2027-06-12 (+160d) |  |  |
| RHD4CZ8L04ST8500 | Finishing and Insulation works for Double Catch Basin - (RD-L-16)-Z5-L016-ST | 2027-01-04 → 2027-06-13 (+160d) | 2027-01-05 → 2027-06-14 (+160d) |  |  |
| 7378 | **RHD4-02-002-Z8-L04-Sewage Network - SW** | 2027-01-02 → 2026-09-15 (-109d) | 2027-02-03 → 2027-07-05 (+152d) |  |  |
| 957 | **RHD4-02-002-L04-(SW)-MH Works - 1200 mm diameter with Back drop** | 2027-01-11 → 2026-09-17 (-116d) | 2027-01-21 → 2027-06-26 (+156d) |  |  |
| RHD4CZ8L04SW3101 | Excavation and PC Blinding works for MH 1200 mm - (RD-L-04)-Z8-L04-SW | 2027-01-11 → 2026-09-17 A (-116d) | 2027-01-12 → 2026-09-19 A (-115d) | 0% → 100% | resources Skilled labor [16.34 h]; Unskilled Labor [16.34 h]; Equipment Opreator [26.14 h]; Excavator-Poclain [16.34 h]; Water Truck [1.63 h]; Dump Truck [8.17 h]; MH (1200mm Diameter) - SW - depth 2.51- 3.5 m with back drop [0.5 nr]; MH (1200mm Diameter) - SW - depth 3.51 -4.5 m with back drop [0.25 nr] → Skilled labor [16.34 h]; Unskilled Labor [16.34 h]; Equipment Opreator [26.14 h]; Excavator-Poclain [16.34 h]; Water Truck [1.6 h]; Dump Truck [8.17 h]; MH (1200mm Diameter) - SW - depth 2.51- 3.5 m with back drop [0.5 nr]; MH (1200mm Diameter) - SW - depth 3.51 -4.5 m with back drop [0.25 nr] |
| RHD4CZ8L04SW3201 | Installation of Base for MH 1200 mm - (RD-L-04)-Z8-L04-SW | 2027-01-13 → 2027-06-17 (+155d) | 2027-01-14 → 2027-06-19 (+156d) |  |  |
| RHD4CZ8L04SW3301 | MH Ring and C.Slab works and Backfilling works for MH 1200 mm - (RD-L-04)-Z8-L04-SW | 2027-01-16 → 2027-06-20 (+155d) | 2027-01-17 → 2027-06-21 (+155d) |  |  |
| RHD4CZ8L04SW3401 | Steel Cover for MH 1200 mm - (RD-L-04)-Z8-L04-SW | 2027-01-18 → 2027-06-22 (+155d) | 2027-01-19 → 2027-06-23 (+155d) |  |  |

| ID | Task | Start | Finish | Duration | Complete | Other |
| --- | --- | --- | --- | --- | --- | --- |
| RHD4CZ8L04SW3501 | Finishing, Benching, Testing works for MH 1200 mm - (RD-L-04)-Z8-L04-SW | 2027-01-20 → 2027-06-24 (+155d) | 2027-01-21 → 2027-06-26 (+156d) |  |  |  |
| 3794 | **RHD4-02-002-L04-(SW)-MH Works - 1200 mm diameter** | 2027-01-13 → 2026-09-15 (-120d) | 2027-02-03 → 2027-07-05 (+152d) |  |  |  |
| RHD4CZ8L04SW3100 | Excavation and PC Blinding works for MH 1200 mm - (RD-L-04)-Z8-L04-SW | 2027-01-13 → 2026-09-15 A (-120d) | 2027-01-16 → 2026-09-17 A (-121d) |  | 0% → 100% | resources Skilled labor [141.57 h]; Unskilled Labor [141.57 h]; Equipment Opreator [226.52 h]; Excavator-Poclain [141.57 h]; Water Truck [14.16 h]; Dump Truck [70.79 h]; MH (1200mm Diameter) - SW - depth 1.51 - 2.5m [6.25 nr]; MH (1200mm Diameter) - SW - depth 2.51 - 3.5m [0.25 nr] → Skilled labor [141.6 h]; Unskilled Labor [141.6 h]; Equipment Opreator [226.52 h]; Excavator-Poclain [141.6 h]; Water Truck [14.16 h]; Dump Truck [70.79 h]; MH (1200mm Diameter) - SW - depth 1.51 - 2.5m [6.25 nr]; MH (1200mm Diameter) - SW - depth 2.51 - 3.5m [0.25 nr] |
| RHD4CZ8L04SW3200 | Installation of Base for MH 1200 mm - (RD-L-04)-Z8-L04-SW | 2027-01-17 → 2027-06-17 (+151d) | 2027-01-20 → 2027-06-21 (+152d) |  |  |  |
| RHD4CZ8L04SW3300 | MH Ring and C.Slab works and Backfilling works for MH 1200 mm - (RD-L-04)-Z8-L04-SW | 2027-01-21 → 2027-06-22 (+152d) | 2027-01-25 → 2027-06-26 (+152d) |  |  |  |
| RHD4CZ8L04SW3400 | Steel Cover for MH 1200 mm - (RD-L-04)-Z8-L04-SW | 2027-01-26 → 2027-06-27 (+152d) | 2027-01-30 → 2027-06-30 (+151d) |  |  | resources Skilled labor [94.42 h]; Unskilled Labor [188.73 h]; Equipment Opreator [18.84 h]; Boom Truck [18.84 h]; MH (1200mm Diameter) - SW - depth 1.51 - 2.5m [1.25 nr]; MH (1200mm Diameter) - SW - depth 2.51 - 3.5m [0.05 nr] → Skilled labor [94.4 h]; Unskilled Labor [188.73 h]; Equipment Opreator [18.84 h]; Boom Truck [18.84 h]; MH (1200mm Diameter) - SW - depth 1.51 - 2.5m [1.25 nr]; MH (1200mm Diameter) - SW - depth 2.51 - 3.5m [0.05 nr] |
| RHD4CZ8L04SW3500 | Finishing, Benching, Testing works for MH 1200 mm - (RD-L-04)-Z8-L04-SW | 2027-01-31 → 2027-07-01 (+151d) | 2027-02-03 → 2027-07-05 (+152d) |  |  |  |
| 3785 | **RHD4-02-002-L04-(SW)-GRP Pipes - 300 mm diameter** | 2027-01-02 → 2026-09-15 (-109d) | 2027-01-12 → 2027-06-21 (+160d) |  |  |  |
| RHD4CZ8L04SW1100 | Excavation works for GRP Pipe Line 300 mm - (RD-L-04)-Z8-L04-SW | 2027-01-02 → 2026-09-15 A (-109d) | 2027-01-03 → 2027-06-12 (+160d) |  | 0% → 42% |  |
| RHD4CZ8L04SW1200 | Bedding works for GRP Pipe Line 300 mm - (RD-L-04)-Z8-L04-SW | 2027-01-04 → 2026-10-27 A (-69d) | 2027-01-05 → 2027-06-14 (+160d) |  | 0% → 42% |  |
| RHD4CZ8L04SW1300 | Installing for GRP Pipe Line 300 mm - (RD-L-04)-Z8-L04-SW | 2027-01-06 → 2026-10-29 A (-69d) | 2027-01-07 → 2027-06-16 (+160d) |  | 0% → 42% |  |
| RHD4CZ8L04SW1400 | Primary Test for GRP Pipe Line 300 mm - (RD-L-04)-Z8-L04-SW | 2027-01-09 → 2027-06-17 (+159d) | 2027-01-10 → 2027-06-19 (+160d) |  |  |  |
| RHD4CZ8L04SW1500 | Backfilling and warning tape works for GRP Pipe Line 300 mm - (RD-L-04)-Z8-L04-SW | 2027-01-11 → 2027-06-20 (+160d) | 2027-01-12 → 2027-06-21 (+160d) |  |  |  |
| 3790 | **RHD4-02-002-L04-(SW)-UPVC Pipes - 200 mm diameter** | 2027-01-04 → 2026-09-15 (-111d) | 2027-01-14 → 2027-06-29 (+166d) |  |  |  |
| RHD4CZ8L04SW2100 | Excavation works for UPVC Pipe Line 200 mm - (RD-L-04)-Z8-L04-SW | 2027-01-04 → 2026-09-15 A (-111d) | 2027-01-05 → 2026-09-17 A (-110d) |  | 0% → 100% | resources Skilled labor [52.6 h]; Unskilled Labor [52.6 h]; Equipment Opreator [63.16 h]; Excavator-Poclain [52.6 h]; Dump Truck [10.56 h]; UPVC (200mm Diameter) - SW - Depth: less than 1.5m [94.71 m]; UPVC (200mm Diameter) - SW - Depth: 1.51m - 2.5m [23.08 m] → Skilled labor [52.6 h]; Unskilled Labor [52.6 h]; Equipment Opreator [63.2 h]; Excavator-Poclain [52.6 h]; Dump Truck [10.56 h]; UPVC (200mm Diameter) - SW - Depth: less than 1.5m [94.71 m]; UPVC (200mm Diameter) - SW - Depth: 1.51m - 2.5m [23.08 m] |
| RHD4CZ8L04SW2200 | Bedding works for UPVC Pipe Line 200 mm - (RD-L-04)-Z8-L04-SW | 2027-01-06 → 2026-09-16 A (-112d) | 2027-01-07 → 2026-09-19 A (-110d) |  | 0% → 100% |  |
| RHD4CZ8L04SW2300 | Installing for UPVC Pipe Line 200 mm - (RD-L-04)-Z8-L04-SW | 2027-01-09 → 2026-09-17 A (-114d) | 2027-01-10 → 2026-10-27 A (-75d) |  | 0% → 100% |  |
| RHD4CZ8L04SW2500 | Backfilling and warning tape works for UPVC Pipe Line 200 mm - (RD-L-04)-Z8-L04-SW | 2027-01-13 → 2026-10-27 A (-78d) | 2027-01-14 → 2027-06-29 (+166d) | 2d → 6d | 0% → 29% |  |
| RHD4CZ8L04SW2400 | Primary Test for UPVC Pipe Line 200 mm - (RD-L-04)-Z8-L04-SW | 2027-01-11 → 2027-06-20 (+160d) | 2027-01-12 → 2027-06-22 (+161d) | 2d → 3d |  |  |
| 7415 | **RHD4-02-002-Z8-L04-Potable Network - PT** | 2027-01-06 → 2027-06-21 (+166d) | 2027-02-08 → 2027-08-04 (+177d) |  |  |  |
| 7417 | **RHD4-02-002-L04-(PT)-HDPE Pipes - 160 mm diameter** | 2027-01-06 → 2027-06-21 (+166d) | 2027-02-03 → 2027-07-27 (+174d) |  |  |  |
| RHD4CZ8L04PT1101 | Excavation works for HDPE Pipline 160 mm - (RD-L-04)-Z8-L04-PT | 2027-01-06 → 2027-06-21 (+166d) | 2027-01-07 → 2027-06-27 (+171d) | 2d → 6d |  |  |
| RHD4CZ8L04PT1201 | Bedding works for HDPE Pipline 160 mm - (RD-L-04)-Z8-L04-PT | 2027-01-09 → 2027-06-28 (+170d) | 2027-01-11 → 2027-07-04 (+174d) | 3d → 6d |  | resources Skilled labor [55.21 h]; Unskilled Labor [110.43 h]; Equipment Opreator [110.43 h]; Excavator-Poclain [55.21 h]; Dump Truck [55.21 h]; HDPE (160mm Diameter) - PT - Depth: less than 1.5m [56.09 m]; HDPE (160mm Diameter) - PT - Depth: 1.51m - 2.5m [10.87 m] → Skilled labor [55.2 h]; Unskilled Labor [110.4 h]; Equipment Opreator [110.4 h]; Excavator-Poclain [55.2 h]; Dump Truck [55.2 h]; HDPE (160mm Diameter) - PT - Depth: less than 1.5m [56.09 m]; HDPE (160mm Diameter) - PT - Depth: 1.51m - 2.5m [10.87 m] |
| RHD4CZ8L04PT1301 | Installing for HDPE Pipline 160 mm - (RD-L-04)-Z8-L04-PT | 2027-01-12 → 2027-07-05 (+174d) | 2027-01-21 → 2027-07-14 (+174d) |  |  |  |
| RHD4CZ8L04PT1401 | Primary Test for HDPE Pipline 160 mm - (RD-L-04)-Z8-L04-PT | 2027-01-23 → 2027-07-15 (+173d) | 2027-01-26 → 2027-07-19 (+174d) |  |  |  |
| RHD4CZ8L04PT1501 | Backfilling and warning tape works for HDPE Pipline 160 mm - (RD-L-04)-Z8-L04-PT | 2027-01-27 → 2027-07-20 (+174d) | 2027-02-03 → 2027-07-27 (+174d) |  |  |  |
| 6478 | **RHD4-02-002-L04-(PT)-Wash out Valve Chambers** | 2027-01-11 → 2027-06-30 (+170d) | 2027-01-19 → 2027-07-08 (+170d) |  |  |  |
| RHD4CZ8L04PT2101 | Excavation and Bedding for Wash out Valve Chambers for Potable Water Network - (RD-L-04)-Z8-L04-PT | 2027-01-11 → 2027-06-30 (+170d) | 2027-01-12 → 2027-07-01 (+170d) |  |  |  |
| RHD4CZ8L04PT2201 | PC works for Wash out Valve Chambers for Potable Water Network - (RD-L-04)-Z8-L04-PT | 2027-01-13 → 2027-07-03 (+171d) | 2027-01-14 → 2027-07-04 (+171d) |  |  |  |
| RHD4CZ8L04PT2301 | Installation for Wash out Valve Chambers for Potable Water Network - (RD-L-04)-Z8-L04-PT | 2027-01-16 → 2027-07-05 (+170d) | 2027-01-17 → 2027-07-06 (+170d) |  |  |  |
| RHD4CZ8L04PT2401 | Backfilling works for Wash out Valve Chambers for Potable Water Network - (RD-L-04)-Z8-L04-PT | 2027-01-18 → 2027-07-07 (+170d) | 2027-01-19 → 2027-07-08 (+170d) |  |  |  |
| 6479 | **RHD4-02-002-L04-(PT)-Wash out Valves** | 2027-01-18 → 2027-07-07 (+170d) | 2027-01-21 → 2027-07-11 (+171d) |  |  |  |
| RHD4CZ8L04PT3102 | Installation for Wash out Valves for Potable Water Network - (RD-L-04)-Z8-L04-PT | 2027-01-18 → 2027-07-07 (+170d) | 2027-01-19 → 2027-07-08 (+170d) |  |  |  |
| RHD4CZ8L04PT3202 | Stem and Service box for Wash out Valves for Potable Water Network - (RD-L-04)-Z8-L04-PT | 2027-01-20 → 2027-07-10 (+171d) | 2027-01-21 → 2027-07-11 (+171d) |  |  |  |
| 6102 | **RHD4-02-002-L04-(PT)-Air Valve Chambers** | 2027-01-13 → 2027-07-03 (+171d) | 2027-01-21 → 2027-07-11 (+171d) |  |  |  |
| RHD4CZ8L04PT2102 | Excavation and Bedding for Air Valve Chambers for Potable Water Network - (RD-L-04)-Z8-L04-PT | 2027-01-13 → 2027-07-03 (+171d) | 2027-01-14 → 2027-07-04 (+171d) |  |  |  |
| RHD4CZ8L04PT2202 | PC works for Air Valve Chambers for Potable Water Network - (RD-L-04)-Z8-L04-PT | 2027-01-16 → 2027-07-05 (+170d) | 2027-01-17 → 2027-07-06 (+170d) |  |  |  |
| RHD4CZ8L04PT2302 | Installation for Air Valve Chambers for Potable Water Network - (RD-L-04)-Z8-L04-PT | 2027-01-18 → 2027-07-07 (+170d) | 2027-01-19 → 2027-07-08 (+170d) |  |  |  |
| RHD4CZ8L04PT2402 | Backfilling works for Air Valve Chambers for Potable Water Network - (RD-L-04)-Z8-L04-PT | 2027-01-20 → 2027-07-10 (+171d) | 2027-01-21 → 2027-07-11 (+171d) |  |  |  |
| 6103 | **RHD4-02-002-L04-(PT)-Air Valves** | 2027-01-20 → 2027-07-10 (+171d) | 2027-01-24 → 2027-07-13 (+170d) |  |  |  |
| RHD4CZ8L04PT3103 | Installation for Air Valves for Potable Water Network - (RD-L-04)-Z8-L04-PT | 2027-01-20 → 2027-07-10 (+171d) | 2027-01-21 → 2027-07-11 (+171d) |  |  |  |
| RHD4CZ8L04PT3203 | Stem and Service box for Air Valves for Potable Water Network - (RD-L-04)-Z8-L04-PT | 2027-01-23 → 2027-07-12 (+170d) | 2027-01-24 → 2027-07-13 (+170d) |  |  |  |
| 7416 | **RHD4-02-002-L04-(PT)-HDPE Pipes - 110 mm diameter** | 2027-01-09 → 2027-06-28 (+170d) | 2027-01-19 → 2027-07-08 (+170d) |  |  |  |
| RHD4CZ8L04PT1100 | Excavation works for HDPE Pipline 110 mm - (RD-L-04)-Z8-L04-PT | 2027-01-09 → 2027-06-28 (+170d) | 2027-01-10 → 2027-06-29 (+170d) |  |  |  |
| RHD4CZ8L04PT1200 | Bedding works for HDPE Pipline 110 mm - (RD-L-04)-Z8-L04-PT | 2027-01-11 → 2027-06-30 (+170d) | 2027-01-12 → 2027-07-01 (+170d) |  |  |  |
| RHD4CZ8L04PT1300 | Installing for HDPE Pipline 110 mm - (RD-L-04)-Z8-L04-PT | 2027-01-13 → 2027-07-03 (+171d) | 2027-01-14 → 2027-07-04 (+171d) |  |  |  |
| RHD4CZ8L04PT1400 | Primary Test for HDPE Pipline 110 mm - (RD-L-04)-Z8-L04-PT | 2027-01-16 → 2027-07-05 (+170d) | 2027-01-17 → 2027-07-06 (+170d) |  |  |  |
| RHD4CZ8L04PT1500 | Backfilling and warning tape works for HDPE Pipline 110 mm - (RD-L-04)-Z8-L04-PT | 2027-01-18 → 2027-07-07 (+170d) | 2027-01-19 → 2027-07-08 (+170d) |  |  |  |
| 7421 | **RHD4-02-002-L04-(PT)-Gate Valves (Direct Buried)** | 2027-01-18 → 2027-07-11 (+174d) | 2027-02-08 → 2027-08-01 (+174d) |  |  |  |
| RHD4CZ8L04PT3100 | Installation for Direct Buried Gate Valves - (RD-L-04)-Z8-L04-PT | 2027-01-18 → 2027-07-11 (+174d) | 2027-01-21 → 2027-07-14 (+174d) |  |  |  |
| RHD4CZ8L04PT3200 | Stem and Service box for Direct Buried Gate Valves - (RD-L-04)-Z8-L04-PT | 2027-02-04 → 2027-07-28 (+174d) | 2027-02-08 → 2027-08-01 (+174d) |  |  |  |
| 7428 | **RHD4-02-002-L04-(PT)-Fire Hydrant** | 2027-01-11 → 2027-06-30 (+170d) | 2027-02-04 → 2027-08-04 (+181d) |  |  |  |
| RHD4CZ8L04PT4100 | Excavation and Bedding and Pipe Installation for Fire Hydrant - (RD-L-04)-Z8-L04-PT | 2027-01-11 → 2027-06-30 (+170d) | 2027-01-13 → 2027-07-10 (+178d) | 3d → 9d |  |  |
| RHD4CZ8L04PT4200 | Valve Installation for Fire Hydrant - (RD-L-04)-Z8-L04-PT | 2027-01-14 → 2027-07-11 (+178d) | 2027-01-17 → 2027-07-17 (+181d) | 3d → 6d |  |  |
| RHD4CZ8L04PT4300 | Stem for Fire Hydrant - (RD-L-04)-Z8-L04-PT | 2027-01-18 → 2027-07-18 (+181d) | 2027-01-24 → 2027-07-24 (+181d) |  |  |  |
| RHD4CZ8L04PT4400 | Fire Installation for Fire Hydrant - (RD-L-04)-Z8-L04-PT | 2027-01-25 → 2027-07-25 (+181d) | 2027-01-31 → 2027-07-31 (+181d) |  |  |  |
| RHD4CZ8L04PT4500 | Protection Barriers for Fire Hydrant - (RD-L-04)-Z8-L04-PT | 2027-02-01 → 2027-08-01 (+181d) | 2027-02-04 → 2027-08-04 (+181d) |  |  | resources Unskilled Labor [39.21 h]; Plumber [39.21 h]; 3-outlet fire hydrant (2 x 2.5 inch and 1 x 4.5 inch) in the form of a separate dry vacuum cylinder [0.9 nr] → Unskilled Labor [39.2 h]; Plumber [39.2 h]; 3-outlet fire hydrant (2 x 2.5 inch and 1 x 4.5 inch) in the form of a separate dry vacuum cylinder [0.9 nr] |
| 7430 | **RHD4-02-002-Z8-L04-Irrigation Network - IRR** | 2027-01-20 → 2027-07-10 (+171d) | 2027-03-13 → 2027-08-30 (+170d) |  |  |  |
| 7431 | **RHD4-02-002-L04-(IRR)-HDPE Pipes - 160 mm diameter** | 2027-01-23 → 2027-07-12 (+170d) | 2027-03-04 → 2027-08-25 (+174d) |  |  |  |
| RHD4CZ8L04IRR1100 | Excavation works for HDPE Pipline 160 mm - (RD-L-04)-Z8-L04-IRR | 2027-01-23 → 2027-07-12 (+170d) | 2027-01-28 → 2027-07-22 (+175d) | 6d → 10d |  | resources Skilled labor [102.59 h]; Unskilled Labor [102.59 h]; Equipment Opreator [123.17 h]; Excavator-Poclain [102.59 h]; Dump Truck [20.47 h]; HDPE (160mm Diameter) - TSE - Depth: less than 1.5m [141.37 m] → Skilled labor [102.59 h]; Unskilled Labor [102.59 h]; Equipment Opreator [123.2 h]; Excavator-Poclain [102.59 h]; Dump Truck [20.47 h]; HDPE (160mm Diameter) - TSE - Depth: less than 1.5m [141.37 m] |
| RHD4CZ8L04IRR1200 | Bedding works for HDPE Pipline 160 mm - (RD-L-04)-Z8-L04-IRR | 2027-01-30 → 2027-07-24 (+175d) | 2027-02-07 → 2027-08-01 (+175d) |  |  |  |
| RHD4CZ8L04IRR1300 | Installing for HDPE Pipline 160 mm - (RD-L-04)-Z8-L04-IRR | 2027-02-08 → 2027-08-02 (+175d) | 2027-02-18 → 2027-08-12 (+175d) |  |  |  |
| RHD4CZ8L04IRR1400 | Primary Test for HDPE Pipline 160 mm - (RD-L-04)-Z8-L04-IRR | 2027-02-20 → 2027-08-14 (+175d) | 2027-02-23 → 2027-08-16 (+174d) |  |  |  |
| RHD4CZ8L04IRR1500 | Backfilling and warning tape works for HDPE Pipline 160 mm - (RD-L-04)-Z8-L04-IRR | 2027-02-24 → 2027-08-17 (+174d) | 2027-03-04 → 2027-08-25 (+174d) |  |  |  |
| 7439 | **RHD4-02-002-L04-(IRR)-Gate Valves (Direct Buried)** | 2027-02-15 → 2027-08-09 (+175d) | 2027-03-13 → 2027-08-30 (+170d) |  |  |  |
| RHD4CZ8L04IRR3100 | Installation for Direct Buried Gate Valves - (RD-L-04)-Z8-L04-IRR | 2027-02-15 → 2027-08-09 (+175d) | 2027-02-18 → 2027-08-12 (+175d) |  |  |  |
| RHD4CZ8L04IRR3200 | Stem and Service box for Direct Buried Gate Valves - (RD-L-04)-Z8-L04-IRR | 2027-03-06 → 2027-08-26 (+173d) | 2027-03-13 → 2027-08-30 (+170d) |  |  |  |
| 1770 | **RHD4-02-002-L04-(IRR)-Air Valves** | 2027-03-02 → 2027-08-23 (+174d) | 2027-03-07 → 2027-08-26 (+172d) |  |  |  |
| RHD4CZ8L04IRR3103 | Installation for Air Valves for Irrigation Network - (RD-L-04)-Z8-L04-IRR | 2027-03-02 → 2027-08-23 (+174d) | 2027-03-03 → 2027-08-24 (+174d) |  |  |  |
| RHD4CZ8L04IRR3203 | Stem and Service box for Air Valves for Irrigation Network - (RD-L-04)-Z8-L04-IRR | 2027-03-04 → 2027-08-25 (+174d) | 2027-03-07 → 2027-08-26 (+172d) | 3d → 2d |  |  |

| ID | Task | Start | Finish | Other |
| --- | --- | --- | --- | --- |
| 6685 | **RHD4-02-002-L04-(IRR)-Wash out Chamber** | 2027-02-20 → 2027-08-14 (+175d) | 2027-03-01 → 2027-08-22 (+174d) |  |
| RHD4CZ8L04IRR2101 | Excavation and Bedding for Wash out Chamber for Irrigation Network - (RD-L-04)-Z8-L04-IRR | 2027-02-20 → 2027-08-14 (+175d) | 2027-02-21 → 2027-08-15 (+175d) |  |
| RHD4CZ8L04IRR2201 | PC works for Wash out Chamber for Irrigation Network - (RD-L-04)-Z8-L04-IRR | 2027-02-23 → 2027-08-16 (+174d) | 2027-02-24 → 2027-08-17 (+174d) |  |
| RHD4CZ8L04IRR2301 | Installation for Wash out Chamber for Irrigation Network - (RD-L-04)-Z8-L04-IRR | 2027-02-25 → 2027-08-18 (+174d) | 2027-02-27 → 2027-08-19 (+173d) |  |
| RHD4CZ8L04IRR2401 | Backfilling works for Wash out Chamber for Irrigation Network - (RD-L-04)-Z8-L04-IRR | 2027-02-28 → 2027-08-21 (+174d) | 2027-03-01 → 2027-08-22 (+174d) |  |
| 6686 | **RHD4-02-002-L04-(IRR)-Wash out Valves** | 2027-02-28 → 2027-08-21 (+174d) | 2027-03-03 → 2027-08-24 (+174d) |  |
| RHD4CZ8L04IRR3102 | Installation for Wash out Valve for Irrigation Network - (RD-L-04)-Z8-L04-IRR | 2027-02-28 → 2027-08-21 (+174d) | 2027-03-01 → 2027-08-22 (+174d) |  |
| RHD4CZ8L04IRR3202 | Stem and Service box for Wash out Valve for Irrigation Network - (RD-L-04)-Z8-L04-IRR | 2027-03-02 → 2027-08-23 (+174d) | 2027-03-03 → 2027-08-24 (+174d) |  |
| 1769 | **RHD4-02-002-L04-(IRR)-Air Valve Chamber** | 2027-02-23 → 2027-08-16 (+174d) | 2027-03-03 → 2027-08-24 (+174d) |  |
| RHD4CZ8L04IRR2102 | Excavation and Bedding for Valve Chamber for Irrigation Network - (RD-L-04)-Z8-L04-IRR | 2027-02-23 → 2027-08-16 (+174d) | 2027-02-24 → 2027-08-17 (+174d) |  |
| RHD4CZ8L04IRR2202 | PC works for Valve Chamber for Irrigation Network - (RD-L-04)-Z8-L04-IRR | 2027-02-25 → 2027-08-18 (+174d) | 2027-02-27 → 2027-08-19 (+173d) |  |
| RHD4CZ8L04IRR2302 | Installation for Valve Chamber for Irrigation Network - (RD-L-04)-Z8-L04-IRR | 2027-02-28 → 2027-08-21 (+174d) | 2027-03-01 → 2027-08-22 (+174d) |  |
| RHD4CZ8L04IRR2402 | Backfilling works for Valve Chamber for Irrigation Network - (RD-L-04)-Z8-L04-IRR | 2027-03-02 → 2027-08-23 (+174d) | 2027-03-03 → 2027-08-24 (+174d) |  |
| 1771 | **RHD4-02-002-L04-(IRR)-Concrete Encasement** | 2027-02-20 → 2027-08-14 (+175d) | 2027-02-21 → 2027-08-15 (+175d) |  |
| RHD4CZ8L04IRR5100 | Pipe Encasement for Irrigation Pipelines - (RD-L-04)-Z8-L04-IRR | 2027-02-20 → 2027-08-14 (+175d) | 2027-02-21 → 2027-08-15 (+175d) |  |
| 3651 | **RHD4-02-002-L04-(IRR)-HDPE Pipes - 250 mm diameter** | 2027-01-20 → 2027-07-10 (+171d) | 2027-01-31 → 2027-07-20 (+170d) |  |
| RHD4CZ8L04IRR1103 | Excavation works for HDPE Pipline 250 mm - (RD-L-04)-Z8-L04-IRR | 2027-01-20 → 2027-07-10 (+171d) | 2027-01-21 → 2027-07-11 (+171d) |  |
| RHD4CZ8L04IRR1203 | Bedding works for HDPE Pipline 250 mm - (RD-L-04)-Z8-L04-IRR | 2027-01-23 → 2027-07-12 (+170d) | 2027-01-24 → 2027-07-13 (+170d) |  |
| RHD4CZ8L04IRR1303 | Installing for HDPE Pipline 250 mm - (RD-L-04)-Z8-L04-IRR | 2027-01-25 → 2027-07-14 (+170d) | 2027-01-26 → 2027-07-15 (+170d) |  |
| RHD4CZ8L04IRR1403 | Primary Test for HDPE Pipline 250 mm - (RD-L-04)-Z8-L04-IRR | 2027-01-27 → 2027-07-17 (+171d) | 2027-01-28 → 2027-07-18 (+171d) |  |
| RHD4CZ8L04IRR1503 | Backfilling and warning tape works for HDPE Pipline 250 mm - (RD-L-04)-Z8-L04-IRR | 2027-01-30 → 2027-07-19 (+170d) | 2027-01-31 → 2027-07-20 (+170d) |  |
| 7464 | **RHD4-02-002-Z8-L04-Medium Voltage Network - MV** | 2027-01-28 → 2027-07-08 (+161d) | 2027-02-09 → 2027-07-20 (+161d) |  |
| 7465 | **RHD4-02-002-L04-(MV)-Medium Voltage cable trench** | 2027-01-28 → 2027-07-08 (+161d) | 2027-02-09 → 2027-07-20 (+161d) |  |
| RHD4CZ8L04MV1100 | Excavation for Medium Voltage Trench - (RD-L-04)-Z8-L04-MV | 2027-01-28 → 2027-07-08 (+161d) | 2027-01-30 → 2027-07-10 (+161d) |  |
| RHD4CZ8L04MV1200 | Trench Backfilling for Medium Voltage Network - (RD-L-04)-Z8-L04-MV | 2027-02-08 → 2027-07-19 (+161d) | 2027-02-09 → 2027-07-20 (+161d) |  |
| 7467 | **RHD4-02-002-L04-(MV)-Medium Voltage cables 3Cx 500 mm²** | 2027-01-31 → 2027-07-11 (+161d) | 2027-02-07 → 2027-07-18 (+161d) |  |
| RHD4CZ8L04MV3100 | Installation of Medium Voltage Cables 3Cx 500 mm² - (RD-L-04)-Z8-L04-MV | 2027-01-31 → 2027-07-11 (+161d) | 2027-02-02 → 2027-07-13 (+161d) | resources Skilled labor [31.58 h]; Unskilled Labor [126.33 h]; Electrician [63.16 h]; Equipment Opreator [94.75 h]; Boom Truck [31.58 h]; Cable Laying Machine [63.16 h]; Cable 13.8 kV 3Cx 500 mm² Al/XLPE,/LLDPE / Unarmored [391.53 m] → Skilled labor [31.58 h]; Unskilled Labor [126.33 h]; Electrician [63.2 h]; Equipment Opreator [94.75 h]; Boom Truck [31.58 h]; Cable Laying Machine [63.2 h]; Cable 13.8 kV 3Cx 500 mm² Al/XLPE,/LLDPE / Unarmored [391.53 m] |
| RHD4CZ8L04MV3200 | Joints Installation of Medium Voltage Cables 3Cx 500 mm² - (RD-L-04)-Z8-L04-MV | 2027-02-03 → 2027-07-14 (+161d) | 2027-02-04 → 2027-07-15 (+161d) |  |
| RHD4CZ8L04MV3300 | Testing of Medium Voltage Cables 3Cx 500 mm² - (RD-L-04)-Z8-L04-MV | 2027-02-06 → 2027-07-17 (+161d) | 2027-02-07 → 2027-07-18 (+161d) |  |
| 7471 | **RHD4-02-002-Z8-L04-Low Voltage Network - LV** | 2027-03-06 → 2027-08-26 (+173d) | 2027-03-17 → 2027-09-04 (+171d) |  |
| 7472 | **RHD4-02-002-L04-(LV)-Low Voltage duct banks** | 2027-03-06 → 2027-08-26 (+173d) | 2027-03-17 → 2027-09-04 (+171d) |  |
| RHD4CZ8L04LV2100 | Excavation of Duct Banks for Low Voltage Network - (RD-L-04)-Z8-L04-LV | 2027-03-06 → 2027-08-26 (+173d) | 2027-03-07 → 2027-08-28 (+174d) |  |
| RHD4CZ8L04LV2200 | Installation of Duct Banks for Low Voltage Network - (RD-L-04)-Z8-L04-LV | 2027-03-08 → 2027-08-29 (+174d) | 2027-03-13 → 2027-08-30 (+170d) |  |
| RHD4CZ8L04LV2300 | Pouring of Duct Banks for Low Voltage Network - (RD-L-04)-Z8-L04-LV | 2027-03-14 → 2027-08-31 (+170d) | 2027-03-15 → 2027-09-01 (+170d) |  |
| RHD4CZ8L04LV2400 | Backfilling of Duct Banks for Low Voltage Network - (RD-L-04)-Z8-L04-LV | 2027-03-16 → 2027-09-02 (+170d) | 2027-03-17 → 2027-09-04 (+171d) |  |
| 7477 | **RHD4-02-002-Z8-L04-Street Lighting Network - SL** | 2027-02-10 → 2027-07-21 (+161d) | 2027-05-27 → 2027-10-27 (+153d) |  |
| 7478 | **RHD4-02-002-L04-(SL)-Street Lighting duct banks** | 2027-03-08 → 2027-08-29 (+174d) | 2027-03-24 → 2027-09-11 (+171d) |  |
| RHD4CZ8L04SL2100 | Excavation of Duct Banks for Street Lighting Network - (RD-L-04)-Z8-L04-SL | 2027-03-08 → 2027-08-29 (+174d) | 2027-03-14 → 2027-08-31 (+170d) |  |
| RHD4CZ8L04SL2200 | Installation of Duct Banks for Street Lighting Network - (RD-L-04)-Z8-L04-SL | 2027-03-15 → 2027-09-01 (+170d) | 2027-03-18 → 2027-09-05 (+171d) |  |
| RHD4CZ8L04SL2300 | Pouring of Duct Banks for Street Lighting Network - (RD-L-04)-Z8-L04-SL | 2027-03-20 → 2027-09-06 (+170d) | 2027-03-22 → 2027-09-08 (+170d) |  |
| RHD4CZ8L04SL2400 | Backfilling of Duct Banks for Street Lighting Network - (RD-L-04)-Z8-L04-SL | 2027-03-23 → 2027-09-09 (+170d) | 2027-03-24 → 2027-09-11 (+171d) |  |
| 7479 | **RHD4-02-002-L04-(SL)-Street Lighting Drawpit** | 2027-02-10 → 2027-07-21 (+161d) | 2027-02-14 → 2027-07-25 (+161d) |  |
| RHD4CZ8L04SL5100 | Excavation of Drawpit size 600x600x900mm for Street Lighting Network - (RD-L-04)-Z8-L04-SL | 2027-02-10 → 2027-07-21 (+161d) | 2027-02-11 → 2027-07-22 (+161d) |  |
| RHD4CZ8L04SL5200 | Installation of Drawpit size 600x600x900mm for Street Lighting Network - (RD-L-04)-Z8-L04-SL | 2027-02-13 → 2027-07-24 (+161d) | 2027-02-14 → 2027-07-25 (+161d) |  |
| 7480 | **RHD4-02-002-L04-(SL)-Street Lighting cables** | 2027-02-15 → 2027-07-26 (+161d) | 2027-04-08 → 2027-09-12 (+157d) |  |
| RHD4CZ8L04SL3100 | Excavation for Street Lighting Cables for Street Lighting Network - (RD-L-04)-Z8-L04-SL | 2027-02-15 → 2027-07-26 (+161d) | 2027-03-02 → 2027-08-09 (+160d) |  |
| RHD4CZ8L04SL3200 | Cable Laying of Street Lighting Cables for Street Lighting Network - (RD-L-04)-Z8-L04-SL | 2027-03-03 → 2027-08-10 (+160d) | 2027-03-18 → 2027-08-22 (+157d) |  |
| RHD4CZ8L04SL3300 | Warning tape and Backfill for Street Lighting Cables for Street Lighting Network - (RD-L-04)-Z8-L04-SL | 2027-03-20 → 2027-08-23 (+156d) | 2027-03-31 → 2027-09-04 (+157d) |  |
| RHD4CZ8L04SL3400 | Testing of Street Lighting Cables for Street Lighting Network - (RD-L-04)-Z8-L04-SL | 2027-04-01 → 2027-09-05 (+157d) | 2027-04-08 → 2027-09-12 (+157d) |  |
| 7481 | **RHD4-02-002-L04-(SL)-Street Lighting Poles** | 2027-04-10 → 2027-09-13 (+156d) | 2027-05-27 → 2027-10-27 (+153d) |  |
| RHD4CZ8L04SL1100 | Excavation for RC Base for Lighting Poles for Street Lighting Network - (RD-L-04)-Z8-L04-SL | 2027-04-10 → 2027-09-13 (+156d) | 2027-04-17 → 2027-09-20 (+156d) |  |
| RHD4CZ8L04SL1200 | Installation for RC Base for Lighting Poles for Street Lighting Network - (RD-L-04)-Z8-L04-SL | 2027-04-18 → 2027-09-21 (+156d) | 2027-04-25 → 2027-09-29 (+157d) |  |
| RHD4CZ8L04SL1300 | Backfill for RC Base for Lighting Poles for Street Lighting Network - (RD-L-04)-Z8-L04-SL | 2027-04-26 → 2027-09-30 (+157d) | 2027-05-03 → 2027-10-07 (+157d) |  |
| RHD4CZ8L04SL1400 | Installation for Lighting Poles for Street Lighting Network - (RD-L-04)-Z8-L04-SL | 2027-05-04 → 2027-10-09 (+158d) | 2027-05-19 → 2027-10-19 (+153d) | resources Skilled labor [102.37 h]; Unskilled Labor [102.37 h]; Electrician [102.37 h]; Equipment Opreator [102.37 h]; Boom Truck [102.37 h]; Lighting poles single arms, height of ( 10 ) meters [56.4 Unit] → Skilled labor [102.4 h]; Unskilled Labor [102.4 h]; Electrician [102.4 h]; Equipment Opreator [102.4 h]; Boom Truck [102.4 h]; Lighting poles single arms, height of ( 10 ) meters [56.4 Unit] |
| RHD4CZ8L04SL1500 | Luminaire Installation for Lighting Poles for Street Lighting Network - (RD-L-04)-Z8-L04-SL | 2027-05-20 → 2027-10-20 (+153d) | 2027-05-27 → 2027-10-27 (+153d) | resources Unskilled Labor [136.46 h]; Electrician [68.28 h]; Equipment Opreator [13.61 h]; Boom Truck [27.33 h]; Street Lighting( LED) Luminaire of Output ?10898 lumen [94 Unit] → Unskilled Labor [136.46 h]; Electrician [68.28 h]; Equipment Opreator [13.6 h]; Boom Truck [27.33 h]; Street Lighting( LED) Luminaire of Output ?10898 lumen [94 Unit] |
| 7483 | **RHD4-02-002-L04-(SL)-Street Lighting Earthing System** | 2027-05-20 → 2027-10-20 (+153d) | 2027-05-22 → 2027-10-21 (+152d) |  |
| RHD4CZ8L04SL6100 | Installation of Earthing for Lighting Poles and Fedder Pillers for Street Lighting Network - (RD-L-04)-Z8-L04-SL | 2027-05-20 → 2027-10-20 (+153d) | 2027-05-22 → 2027-10-21 (+152d) |  |
| 7489 | **RHD4-02-002-Z8-L04-Telecommunications Network - TC** | 2027-01-23 → 2027-07-12 (+170d) | 2027-04-03 → 2027-09-15 (+165d) |  |
| 7490 | **RHD4-02-002-L04-(TC)-Telecommunications Ducts** | 2027-01-23 → 2027-07-12 (+170d) | 2027-03-24 → 2027-09-06 (+166d) |  |
| RHD4CZ8L04TC2100 | Excavation of HDPE Ducts for Telecom Network - (RD-L-04)-Z8-L04-TC | 2027-01-23 → 2027-07-12 (+170d) | 2027-02-07 → 2027-07-27 (+170d) |  |
| RHD4CZ8L04TC2200 | Installation of HDPE Ducts for Telecom Network - (RD-L-04)-Z8-L04-TC | 2027-02-08 → 2027-07-28 (+170d) | 2027-03-04 → 2027-08-21 (+170d) |  |
| RHD4CZ8L04TC2400 | Backfilling of HDPE Ducts for Telecom Network - (RD-L-04)-Z8-L04-TC | 2027-03-06 → 2027-08-22 (+169d) | 2027-03-24 → 2027-09-06 (+166d) |  |
| 7491 | **RHD4-02-002-L04-(TC)-Telecommunications Manholes** | 2027-03-25 → 2027-09-07 (+166d) | 2027-04-03 → 2027-09-15 (+165d) |  |
| RHD4CZ8L04TC5100 | Excavation for Manholes for Telecom Network - (RD-L-04)-Z8-L04-TC | 2027-03-25 → 2027-09-07 (+166d) | 2027-03-29 → 2027-09-11 (+166d) | resources Skilled labor [9.58 h]; Unskilled Labor [9.58 h]; Equipment Opreator [7.62 h]; Excavator-Poclain [3.81 h]; Dump Truck [3.81 h]; Manhole Type 1 - TC [1.05 nr] → Skilled labor [9.6 h]; Unskilled Labor [9.6 h]; Equipment Opreator [7.62 h]; Excavator-Poclain [3.81 h]; Dump Truck [3.81 h]; Manhole Type 1 - TC [1.05 nr] |
| RHD4CZ8L04TC5200 | Installation of Manholes for Telecom Network - (RD-L-04)-Z8-L04-TC | 2027-03-30 → 2027-09-12 (+166d) | 2027-04-03 → 2027-09-15 (+165d) | resources Skilled labor [9.58 h]; Unskilled Labor [9.58 h]; Equipment Opreator [3.81 h]; Boom Truck [3.81 h]; Manhole Type 1 - TC [5.95 nr] → Skilled labor [9.6 h]; Unskilled Labor [9.6 h]; Equipment Opreator [3.81 h]; Boom Truck [3.81 h]; Manhole Type 1 - TC [5.95 nr] |
| 7493 | **RHD4-02-002-Z8-L04-Information and Communication Technologies - ICT** | 2026-08-20 → 2027-02-14 (+178d) | 2027-06-08 → 2027-11-17 (+162d) |  |
| 7494 | **RHD4-02-002-L04-(ICT)-Information and Communication Technologies Ducts** | 2027-04-04 → 2027-09-16 (+165d) | 2027-05-30 → 2027-11-08 (+162d) |  |
| RHD4CZ8L04ICT2100 | Excavation of HDPE Ducts for ICT Network - (RD-L-04)-Z8-L04-ICT | 2027-04-04 → 2027-09-16 (+165d) | 2027-04-24 → 2027-10-07 (+166d) |  |
| RHD4CZ8L04ICT2200 | Installation of HDPE Ducts for ICT Network - (RD-L-04)-Z8-L04-ICT | 2027-04-25 → 2027-10-09 (+167d) | 2027-05-04 → 2027-10-18 (+167d) |  |
| RHD4CZ8L04ICT2400 | Backfilling of HDPE Ducts for ICT Network - (RD-L-04)-Z8-L04-ICT | 2027-05-05 → 2027-10-19 (+167d) | 2027-05-30 → 2027-11-08 (+162d) |  |

| ID | Task | Start | Finish | Duration | Other |
| --- | --- | --- | --- | --- | --- |
| 7495 | **RHD4-02-002-L04-(ICT)-Information and Communication Technologies Manholes** | 2027-05-31 → 2027-11-09 (+162d) | 2027-06-08 → 2027-11-17 (+162d) |  |  |
| RHD4CZ8L04ICT5100 | Excavation for Manholes for ICT Network - (RD-L-04)-Z8-L04-ICT | 2027-05-31 → 2027-11-09 (+162d) | 2027-06-03 → 2027-11-13 (+163d) |  | resources Skilled labor [13.61 h]; Unskilled Labor [13.61 h]; Equipment Opreator [10.89 h]; Excavator-Poclain [5.45 h]; Dump Truck [5.45 h]; Manhole Type 1 - ICT [0.9 nr]; Manhole Type 2 - ICT [0.3 nr] → Skilled labor [13.6 h]; Unskilled Labor [13.6 h]; Equipment Opreator [10.89 h]; Excavator-Poclain [5.45 h]; Dump Truck [5.45 h]; Manhole Type 1 - ICT [0.9 nr]; Manhole Type 2 - ICT [0.3 nr] |
| RHD4CZ8L04ICT5200 | Installation of Manholes for ICT Network - (RD-L-04)-Z8-L04-ICT | 2027-06-05 → 2027-11-14 (+162d) | 2027-06-08 → 2027-11-17 (+162d) |  | resources Skilled labor [13.61 h]; Unskilled Labor [13.61 h]; Equipment Opreator [5.45 h]; Boom Truck [5.45 h]; Manhole Type 1 - ICT [5.1 nr]; Manhole Type 2 - ICT [1.7 nr] → Skilled labor [13.6 h]; Unskilled Labor [13.6 h]; Equipment Opreator [5.45 h]; Boom Truck [5.45 h]; Manhole Type 1 - ICT [5.1 nr]; Manhole Type 2 - ICT [1.7 nr] |
| 7496 | **RHD4-02-002-L04-(ICT)-Information and Communication Technologies Road Crossings** | 2026-08-20 → 2027-02-14 (+178d) | 2026-08-29 → 2027-02-27 (+182d) |  |  |
| RHD4CZ8L04ICT3100 | Excavation for Road Crossings for ICT Network - (RD-L-04)-Z8-L04-ICT | 2026-08-20 → 2027-02-14 (+178d) | 2026-08-22 → 2027-02-15 (+177d) |  |  |
| RHD4CZ8L04ICT3200 | Installation of Road Crossings for ICT Network - (RD-L-04)-Z8-L04-ICT | 2026-08-23 → 2027-02-20 (+181d) | 2026-08-24 → 2027-02-21 (+181d) |  |  |
| RHD4CZ8L04ICT3300 | Pouring of Road Crossings for ICT Network - (RD-L-04)-Z8-L04-ICT | 2026-08-25 → 2027-02-23 (+182d) | 2026-08-26 → 2027-02-24 (+182d) |  | resources Skilled labor [20.15 h]; Unskilled Labor [20.15 h]; Equipment Opreator [8.06 h]; Concrete Mixer Truck [4.03 h]; Concrete Pump [4.03 h]; Road crossing ducts, (2*50mm) HDPE -ICT [18.07 m] → Skilled labor [20.15 h]; Unskilled Labor [20.15 h]; Equipment Opreator [8.06 h]; Concrete Mixer Truck [4 h]; Concrete Pump [4 h]; Road crossing ducts, (2*50mm) HDPE -ICT [18.07 m] |
| RHD4CZ8L04ICT3400 | Backfilling of Road Crossings for ICT Network - (RD-L-04)-Z8-L04-ICT | 2026-08-27 → 2027-02-25 (+182d) | 2026-08-29 → 2027-02-27 (+182d) |  |  |
| 7497 | **RHD4-02-002-Z8-L04-Security Network - CCTV** | 2027-06-09 → 2027-11-18 (+162d) | 2027-07-08 → 2027-12-18 (+163d) |  |  |
| 7498 | **RHD4-02-002-L04-(CCTV)-Civil Works** | 2027-06-09 → 2027-11-18 (+162d) | 2027-06-14 → 2027-11-23 (+162d) |  |  |
| RHD4CZ8L04CCTV2100 | Civil Works for Security Network - (RD-L-04)-Z8-L04-CCTV | 2027-06-09 → 2027-11-18 (+162d) | 2027-06-14 → 2027-11-23 (+162d) |  |  |
| 7499 | **RHD4-02-002-L04-(CCTV)-CCTV Poles** | 2027-06-15 → 2027-11-24 (+162d) | 2027-06-26 → 2027-12-05 (+162d) |  |  |
| RHD4CZ8L04CCTV1100 | Excavation for RC Base for CCTV Poles for Security Network - (RD-L-04)-Z8-L04-CCTV | 2027-06-15 → 2027-11-24 (+162d) | 2027-06-16 → 2027-11-25 (+162d) |  |  |
| RHD4CZ8L04CCTV1200 | Installation for RC Base for CCTV Poles for Security Network - (RD-L-04)-Z8-L04-CCTV | 2027-06-17 → 2027-11-27 (+163d) | 2027-06-19 → 2027-11-28 (+162d) |  |  |
| RHD4CZ8L04CCTV1300 | Backfill for RC Base for CCTV Poles for Security Network - (RD-L-04)-Z8-L04-CCTV | 2027-06-20 → 2027-11-29 (+162d) | 2027-06-21 → 2027-11-30 (+162d) |  |  |
| RHD4CZ8L04CCTV1400 | Installation for CCTV Poles for Security Network - (RD-L-04)-Z8-L04-CCTV | 2027-06-22 → 2027-12-01 (+162d) | 2027-06-23 → 2027-12-02 (+162d) |  |  |
| RHD4CZ8L04CCTV1500 | Protection post Installation for CCTV Poles for Security Network - (RD-L-04)-Z8-L04-CCTV | 2027-06-24 → 2027-12-04 (+163d) | 2027-06-26 → 2027-12-05 (+162d) |  |  |
| 7500 | **RHD4-02-002-L04-(CCTV)-Camera** | 2027-06-27 → 2027-12-06 (+162d) | 2027-06-28 → 2027-12-07 (+162d) |  |  |
| RHD4CZ8L04CCTV3100 | Installation for Cameras for Security Network - (RD-L-04)-Z8-L04-CCTV | 2027-06-27 → 2027-12-06 (+162d) | 2027-06-28 → 2027-12-07 (+162d) |  |  |
| 7501 | **RHD4-02-002-L04-(CCTV)-Power and Infrastructure** | 2027-06-24 → 2027-12-04 (+163d) | 2027-06-26 → 2027-12-05 (+162d) |  |  |
| RHD4CZ8L04CCTV4100 | Installation of Power outlet, UPS and midspan for PTZ Camerafor Cameras for Security Network - (RD-L-04)-Z8-L04-CCTV | 2027-06-24 → 2027-12-04 (+163d) | 2027-06-26 → 2027-12-05 (+162d) |  |  |
| 7503 | **RHD4-02-002-L04-(CCTV)-CCTV Panels and Components** | 2027-06-29 → 2027-12-08 (+162d) | 2027-07-08 → 2027-12-18 (+163d) |  |  |
| RHD4CZ8L04CCTV6100 | Installation for CCTV Panels for Security Network - (RD-L-04)-Z8-L04-CCTV | 2027-06-29 → 2027-12-08 (+162d) | 2027-07-08 → 2027-12-18 (+163d) |  |  |
| 7514 | **RHD4-02-002-Z8-C014** | 2026-08-30 → 2027-02-28 (+182d) | 2027-08-18 → 2028-01-30 (+165d) |  |  |
| 7693 | **RHD4-02-002-Z8-C014-Road Works - RD** | 2026-08-30 → 2027-02-28 (+182d) | 2027-08-18 → 2028-01-30 (+165d) |  |  |
| 7696 | **RHD4-02-002-C014-(RD)-Bituminous base course Two Layers, including (MC1)&(RC2)** | 2026-09-09 → 2027-03-28 (+200d) | 2027-08-03 → 2028-01-15 (+165d) |  |  |
| RHD4CZ8C014RD3100 | Supply, lay and Asphaltic base course including Prime Coat (MC1) for 1st Layer - (RD-C-1/4)-Z8-C014-RD | 2026-09-09 → 2027-03-28 (+200d) | 2026-09-12 → 2027-03-31 (+200d) | 3d → 4d | resources Skilled labor [36.81 h]; Unskilled Labor [221.18 h]; Equipment Opreator [552.9 h]; Bobcat [36.81 h]; Roller compactor [36.81 h]; Asphalt Paver [36.81 h]; Rubber Compactor [73.73 h]; MC1/RC2 Sprinkler [36.81 h]; Dump Truck [331.72 h]; Bituminous base course (Grading I - Class A), including Prime coat (MC1) & tack coate (RC2) [1348.58 m3] → Skilled labor [36.8 h]; Unskilled Labor [221.18 h]; Equipment Opreator [552.9 h]; Bobcat [36.8 h]; Roller compactor [36.8 h]; Asphalt Paver [36.8 h]; Rubber Compactor [73.73 h]; MC1/RC2 Sprinkler [36.8 h]; Dump Truck [331.72 h]; Bituminous base course (Grading I - Class A), including Prime coat (MC1) & tack coate (RC2) [1348.58 m3] |
| RHD4CZ8C014RD3200 | Supply, lay and Asphaltic base course including Tack Coat (RC2) for 2nd Layer - (RD-C-1/4)-Z8-C014-RD | 2027-07-31 → 2028-01-11 (+164d) | 2027-08-03 → 2028-01-15 (+165d) |  | resources Skilled labor [36.81 h]; Unskilled Labor [221.18 h]; Equipment Opreator [552.9 h]; Bobcat [36.81 h]; Roller compactor [36.81 h]; Asphalt Paver [36.81 h]; Rubber Compactor [73.73 h]; MC1/RC2 Sprinkler [36.81 h]; Dump Truck [331.72 h]; Bituminous base course (Grading I - Class A), including Prime coat (MC1) & tack coate (RC2) [1348.58 m3] → Skilled labor [36.8 h]; Unskilled Labor [221.18 h]; Equipment Opreator [552.9 h]; Bobcat [36.8 h]; Roller compactor [36.8 h]; Asphalt Paver [36.8 h]; Rubber Compactor [73.73 h]; MC1/RC2 Sprinkler [36.8 h]; Dump Truck [331.72 h]; Bituminous base course (Grading I - Class A), including Prime coat (MC1) & tack coate (RC2) [1348.58 m3] |
| 7698 | **RHD4-02-002-C014-(RD)-Precast Concrete Curb** | 2027-08-04 → 2028-01-16 (+165d) | 2027-08-09 → 2028-01-20 (+164d) |  |  |
| RHD4CZ8C014RD5100 | Supply and installation Precast Concrete Kerb for Roads - (RD-C-1/4)-Z8-C014-RD | 2027-08-04 → 2028-01-16 (+165d) | 2027-08-09 → 2028-01-20 (+164d) |  |  |
| 7694 | **RHD4-02-002-C014-(RD)-Subgrade** | 2026-08-30 → 2027-02-28 (+182d) | 2026-09-02 → 2027-03-16 (+195d) |  |  |
| RHD4CZ8C014RD1100 | Supply, lay and compaction subgrade compacted thickness 300 mm for Roads - (RD-C-1/4)-Z8-C014-RD | 2026-08-30 → 2027-02-28 (+182d) | 2026-09-02 → 2027-03-16 (+195d) | 4d → 12d | resources Skilled labor [125.35 h]; Unskilled Labor [250.7 h]; Electrician [125.35 h]; Equipment Opreator [855.98 h]; Water Truck [41.38 h]; Roller compactor [62.62 h]; Grader [125.35 h]; Dump Truck [626.63 h]; Subgrade [6027.67 m3] → Skilled labor [125.35 h]; Unskilled Labor [250.7 h]; Electrician [125.35 h]; Equipment Opreator [856 h]; Water Truck [41.38 h]; Roller compactor [62.62 h]; Grader [125.35 h]; Dump Truck [626.63 h]; Subgrade [6027.67 m3] |
| 7695 | **RHD4-02-002-C014-(RD)-Aggregate Base Course** | 2026-09-03 → 2027-03-17 (+195d) | 2026-09-08 → 2027-03-27 (+200d) |  |  |
| RHD4CZ8C014RD2100 | Supply, lay and compaction Aggregate base course compacted thickness 300 mmfor Roads - (RD-C-1/4)-Z8-C014-RD | 2026-09-03 → 2027-03-17 (+195d) | 2026-09-08 → 2027-03-27 (+200d) | 5d → 9d | resources Skilled labor [46.39 h]; Unskilled Labor [92.79 h]; Equipment Opreator [587.64 h]; Water Truck [30.6 h]; Roller compactor [92.79 h]; Grader [92.79 h]; Dump Truck [371.36 h]; Aggregate Base Courses [3785.98 m3] → Skilled labor [46.4 h]; Unskilled Labor [92.8 h]; Equipment Opreator [587.64 h]; Water Truck [30.6 h]; Roller compactor [92.8 h]; Grader [92.8 h]; Dump Truck [371.36 h]; Aggregate Base Courses [3785.98 m3] |
| 7701 | **RHD4-02-002-C014-(RD)-Traffic Signage** | 2027-08-10 → 2028-01-22 (+165d) | 2027-08-18 → 2028-01-30 (+165d) |  |  |
| RHD4CZ8C014RD8100 | Installation of Traffic Signage for Road Network - (RD-C-1/4)-Z8-C014-RD | 2027-08-10 → 2028-01-22 (+165d) | 2027-08-18 → 2028-01-30 (+165d) |  |  |
| 7697 | **RHD4-02-002-C014-(RD)-Bituminous concrete wearing course including tack coat (RC2)** | 2027-08-10 → 2028-01-22 (+165d) | 2027-08-11 → 2028-01-23 (+165d) |  |  |
| RHD4CZ8C014RD4100 | Supply, lay and compaction Asphaltic wearing course including tack Coat (RC2)for Road Network - (RD-C-1/4)-Z8-C014-RD | 2027-08-10 → 2028-01-22 (+165d) | 2027-08-11 → 2028-01-23 (+165d) |  | resources Skilled labor [18.95 h]; Unskilled Labor [113.91 h]; Equipment Opreator [284.78 h]; Bobcat [18.95 h]; Roller compactor [18.95 h]; Asphalt Paver [18.95 h]; Rubber Compactor [38.01 h]; MC1/RC2 Sprinkler [18.95 h]; Dump Truck [170.87 h]; Bituminous concrete wearing course, (Grading I - Class A), including tack coat (RC2) [905.67 m3] → Skilled labor [18.95 h]; Unskilled Labor [113.91 h]; Equipment Opreator [284.8 h]; Bobcat [18.95 h]; Roller compactor [18.95 h]; Asphalt Paver [18.95 h]; Rubber Compactor [38.01 h]; MC1/RC2 Sprinkler [18.95 h]; Dump Truck [170.87 h]; Bituminous concrete wearing course, (Grading I - Class A), including tack coat (RC2) [905.67 m3] |
| 7700 | **RHD4-02-002-C014-(RD)-Pavement Marking** | 2027-08-12 → 2028-01-24 (+165d) | 2027-08-16 → 2028-01-27 (+164d) |  |  |
| RHD4CZ8C014RD7100 | Pavement Markings for Road Network - (RD-C-1/4)-Z8-C014-RD | 2027-08-12 → 2028-01-24 (+165d) | 2027-08-16 → 2028-01-27 (+164d) |  | resources Skilled labor [42.36 h]; Unskilled Labor [84.73 h]; Equipment Opreator [42.36 h]; Road Marking Machine [42.36 h]; Retroreflective Thermoplastic White Traffic Markings [283.45 m2]; Retroreflective Thermoplastic Yellow, Traffic Markings [322 m2]; Retroreflective raised pavement markers (cat eyes) [400 nr] → Skilled labor [42.4 h]; Unskilled Labor [84.73 h]; Equipment Opreator [42.4 h]; Road Marking Machine [42.4 h]; Retroreflective Thermoplastic White Traffic Markings [283.45 m2]; Retroreflective Thermoplastic Yellow, Traffic Markings [322 m2]; Retroreflective raised pavement markers (cat eyes) [400 nr] |
| 7240 | **RHD4-02-002-Z8-C014-Irrigation Network - IRR** | 2027-01-28 → 2027-06-22 (+145d) | 2027-02-21 → 2027-07-15 (+144d) |  |  |
| 8188 | **RHD4-02-002-C014-(IRR)-HDPE Pipes - 180 mm diameter** | 2027-01-28 → 2027-06-22 (+145d) | 2027-02-20 → 2027-07-14 (+144d) |  |  |
| RHD4CZ8C014IRR1101 | Excavation works for HDPE Pipline 180 mm - (RD-C-1/4)-Z8-C014-IRR | 2027-01-28 → 2027-06-22 (+145d) | 2027-02-02 → 2027-06-27 (+145d) |  |  |
| RHD4CZ8C014IRR1201 | Bedding works for HDPE Pipline 180 mm - (RD-C-1/4)-Z8-C014-IRR | 2027-02-03 → 2027-06-28 (+145d) | 2027-02-07 → 2027-07-01 (+144d) |  |  |
| RHD4CZ8C014IRR1301 | Installing for HDPE Pipline 180 mm - (RD-C-1/4)-Z8-C014-IRR | 2027-02-08 → 2027-07-03 (+145d) | 2027-02-13 → 2027-07-07 (+144d) |  |  |
| RHD4CZ8C014IRR1401 | Primary Test for HDPE Pipline 180 mm - (RD-C-1/4)-Z8-C014-IRR | 2027-02-14 → 2027-07-08 (+144d) | 2027-02-15 → 2027-07-10 (+145d) |  |  |
| RHD4CZ8C014IRR1501 | Backfilling and warning tape works for HDPE Pipline 180 mm - (RD-C-1/4)-Z8-C014-IRR | 2027-02-16 → 2027-07-11 (+145d) | 2027-02-20 → 2027-07-14 (+144d) |  |  |
| 6685 | **RHD4-02-002-C014-(IRR)-Wash out Chamber** | 2027-02-10 → 2027-07-05 (+145d) | 2027-02-18 → 2027-07-13 (+145d) |  |  |
| RHD4CZ8C014IRR2101 | Excavation and Bedding for Wash out Chamber for Irrigation Network - (RD-C-1/4)-Z8-C014-IRR | 2027-02-10 → 2027-07-05 (+145d) | 2027-02-11 → 2027-07-06 (+145d) |  |  |
| RHD4CZ8C014IRR2201 | PC works for Wash out Chamber for Irrigation Network - (RD-C-1/4)-Z8-C014-IRR | 2027-02-13 → 2027-07-07 (+144d) | 2027-02-14 → 2027-07-08 (+144d) |  |  |
| RHD4CZ8C014IRR2301 | Installation for Wash out Chamber for Irrigation Network - (RD-C-1/4)-Z8-C014-IRR | 2027-02-15 → 2027-07-10 (+145d) | 2027-02-16 → 2027-07-11 (+145d) |  |  |
| RHD4CZ8C014IRR2401 | Backfilling works for Wash out Chamber for Irrigation Network - (RD-C-1/4)-Z8-C014-IRR | 2027-02-17 → 2027-07-12 (+145d) | 2027-02-18 → 2027-07-13 (+145d) |  |  |
| 6686 | **RHD4-02-002-C014-(IRR)-Wash out Valves** | 2027-02-17 → 2027-07-12 (+145d) | 2027-02-21 → 2027-07-15 (+144d) |  |  |
| RHD4CZ8C014IRR3102 | Installation for Wash out Valve for Irrigation Network - (RD-C-1/4)-Z8-C014-IRR | 2027-02-17 → 2027-07-12 (+145d) | 2027-02-18 → 2027-07-13 (+145d) |  |  |
| RHD4CZ8C014IRR3202 | Stem and Service box for Wash out Valve for Irrigation Network - (RD-C-1/4)-Z8-C014-IRR | 2027-02-20 → 2027-07-14 (+144d) | 2027-02-21 → 2027-07-15 (+144d) |  |  |
| 6107 | **RHD4-02-002-C014-(IRR)-HDPE Pipes - 160 mm diameter** | 2027-02-03 → 2027-06-28 (+145d) | 2027-02-14 → 2027-07-08 (+144d) |  |  |
| RHD4CZ8C014IRR1100 | Excavation works for HDPE Pipline 160 mm - (RD-C-1/4)-Z8-C014-IRR | 2027-02-03 → 2027-06-28 (+145d) | 2027-02-04 → 2027-06-29 (+145d) |  | resources Skilled labor [8.17 h]; Unskilled Labor [8.17 h]; Equipment Opreator [9.8 h]; Excavator-Poclain [8.17 h]; Dump Truck [1.63 h]; HDPE (160mm Diameter) - TSE - Depth: less than 1.5m [11.2 m] → Skilled labor [8.17 h]; Unskilled Labor [8.17 h]; Equipment Opreator [9.8 h]; Excavator-Poclain [8.17 h]; Dump Truck [1.6 h]; HDPE (160mm Diameter) - TSE - Depth: less than 1.5m [11.2 m] |
| RHD4CZ8C014IRR1200 | Bedding works for HDPE Pipline 160 mm - (RD-C-1/4)-Z8-C014-IRR | 2027-02-06 → 2027-06-30 (+144d) | 2027-02-07 → 2027-07-01 (+144d) |  |  |
| RHD4CZ8C014IRR1300 | Installing for HDPE Pipline 160 mm - (RD-C-1/4)-Z8-C014-IRR | 2027-02-08 → 2027-07-03 (+145d) | 2027-02-09 → 2027-07-04 (+145d) |  |  |
| RHD4CZ8C014IRR1400 | Primary Test for HDPE Pipline 160 mm - (RD-C-1/4)-Z8-C014-IRR | 2027-02-10 → 2027-07-05 (+145d) | 2027-02-11 → 2027-07-06 (+145d) |  |  |
| RHD4CZ8C014IRR1500 | Backfilling and warning tape works for HDPE Pipline 160 mm - (RD-C-1/4)-Z8-C014-IRR | 2027-02-13 → 2027-07-07 (+144d) | 2027-02-14 → 2027-07-08 (+144d) |  |  |
| 6115 | **RHD4-02-002-C014-(IRR)-Gate Valves (Direct Buried)** | 2027-02-08 → 2027-07-03 (+145d) | 2027-02-16 → 2027-07-11 (+145d) |  |  |
| RHD4CZ8C014IRR3100 | Installation for Direct Buried Gate Valves - (RD-C-1/4)-Z8-C014-IRR | 2027-02-08 → 2027-07-03 (+145d) | 2027-02-09 → 2027-07-04 (+145d) |  |  |
| RHD4CZ8C014IRR3200 | Stem and Service box for Direct Buried Gate Valves - (RD-C-1/4)-Z8-C014-IRR | 2027-02-15 → 2027-07-10 (+145d) | 2027-02-16 → 2027-07-11 (+145d) |  |  |
| 7653 | **RHD4-02-002-Z8-C014-Medium Voltage Network - MV** | 2027-01-31 → 2027-07-11 (+161d) | 2027-02-27 → 2027-08-05 (+159d) |  |  |
| 7654 | **RHD4-02-002-C014-(MV)-Medium Voltage cable trench** | 2027-01-31 → 2027-07-11 (+161d) | 2027-02-08 → 2027-07-19 (+161d) |  |  |
| RHD4CZ8C014MV1100 | Excavation for Medium Voltage Trench - (RD-C-1/4)-Z8-C014-MV | 2027-01-31 → 2027-07-11 (+161d) | 2027-02-02 → 2027-07-13 (+161d) |  |  |
| RHD4CZ8C014MV1200 | Trench Backfilling for Medium Voltage Network - (RD-C-1/4)-Z8-C014-MV | 2027-02-06 → 2027-07-17 (+161d) | 2027-02-08 → 2027-07-19 (+161d) |  |  |
| 7656 | **RHD4-02-002-C014-(MV)-Medium Voltage cables 3Cx 500 mm²** | 2027-02-03 → 2027-07-14 (+161d) | 2027-02-27 → 2027-08-05 (+159d) |  |  |
| RHD4CZ8C014MV3100 | Installation of Medium Voltage Cables 3Cx 500 mm² - (RD-C-1/4)-Z8-C014-MV | 2027-02-03 → 2027-07-14 (+161d) | 2027-02-09 → 2027-07-20 (+161d) |  | resources Skilled labor [58.81 h]; Unskilled Labor [235.23 h]; Electrician [117.62 h]; Equipment Opreator [176.42 h]; Boom Truck [58.81 h]; Cable Laying Machine [117.62 h]; Cable 13.8 kV 3Cx 500 mm² Al/XLPE,/LLDPE / Unarmored [729.13 m] → Skilled labor [58.81 h]; Unskilled Labor [235.2 h]; Electrician [117.6 h]; Equipment Opreator [176.42 h]; Boom Truck [58.81 h]; Cable Laying Machine [117.6 h]; Cable 13.8 kV 3Cx 500 mm² Al/XLPE,/LLDPE / Unarmored [729.13 m] |

| ID | Task | Start | Finish | Duration | Other |
| --- | --- | --- | --- | --- | --- |
| RHD4CZ8C014MV3200 | Joints Installation of Medium Voltage Cables 3Cx 500 mm² - (RD-C-1/4)-Z8-C014-MV | 2027-02-10 → 2027-07-21 (+161d) | 2027-02-11 → 2027-07-22 (+161d) |  |  |
| RHD4CZ8C014MV3300 | Testing of Medium Voltage Cables 3Cx 500 mm² - (RD-C-1/4)-Z8-C014-MV | 2027-02-13 → 2027-07-24 (+161d) | 2027-02-14 → 2027-07-25 (+161d) |  |  |
| RHD4CZ8C014MV3400 | Termination of Medium Voltage Cables 3Cx 500 mm² - (RD-C-1/4)-Z8-C014-MV | 2027-02-25 → 2027-08-04 (+160d) | 2027-02-27 → 2027-08-05 (+159d) |  |  |
| 7657 | **RHD4-02-002-C014-(MV)-Medium Voltage cables 3Cx 50 mm²** | 2027-02-03 → 2027-07-14 (+161d) | 2027-02-27 → 2027-08-05 (+159d) |  |  |
| RHD4CZ8C014MV3101 | Installation of Medium Voltage Cables 3Cx 50 mm² - (RD-C-1/4)-Z8-C014-MV | 2027-02-03 → 2027-07-14 (+161d) | 2027-02-04 → 2027-07-15 (+161d) |  |  |
| RHD4CZ8C014MV3301 | Testing of Medium Voltage Cables 3Cx 50 mm² - (RD-C-1/4)-Z8-C014-MV | 2027-02-09 → 2027-07-20 (+161d) | 2027-02-10 → 2027-07-21 (+161d) |  |  |
| RHD4CZ8C014MV3401 | Termination of Medium Voltage Cables 3Cx 50 mm² - (RD-C-1/4)-Z8-C014-MV | 2027-02-25 → 2027-08-04 (+160d) | 2027-02-27 → 2027-08-05 (+159d) |  |  |
| 7659 | **RHD4-02-002-C014-(MV)-Unit Substations** | 2027-02-09 → 2027-07-20 (+161d) | 2027-02-24 → 2027-08-03 (+160d) |  |  |
| RHD4CZ8C014MV5100 | Excavation for Unit Substations for Medium Voltage Network - (RD-C-1/4)-Z8-C014-MV | 2027-02-09 → 2027-07-20 (+161d) | 2027-02-10 → 2027-07-21 (+161d) |  |  |
| RHD4CZ8C014MV5200 | Concrete Base Placement for Unit Substations for Medium Voltage Network - (RD-C-1/4)-Z8-C014-MV | 2027-02-11 → 2027-07-22 (+161d) | 2027-02-13 → 2027-07-24 (+161d) |  |  |
| RHD4CZ8C014MV5300 | Installation for Fences and doors for Medium Voltage Network - (RD-C-1/4)-Z8-C014-MV | 2027-02-14 → 2027-07-25 (+161d) | 2027-02-18 → 2027-07-29 (+161d) |  |  |
| RHD4CZ8C014MV5400 | Installation for Unit Substations for Medium Voltage Network - (RD-C-1/4)-Z8-C014-MV | 2027-02-20 → 2027-07-31 (+161d) | 2027-02-24 → 2027-08-03 (+160d) |  |  |
| 7660 | **RHD4-02-002-Z8-C014-Low Voltage Network - LV** | 2027-02-28 → 2027-08-07 (+160d) | 2027-03-18 → 2027-08-22 (+157d) |  |  |
| 7663 | **RHD4-02-002-C014-(LV)-Low Voltage cables** | 2027-02-28 → 2027-08-07 (+160d) | 2027-03-08 → 2027-08-15 (+160d) |  |  |
| RHD4CZ8C014LV3100 | Excavation for Low Voltage Cables for Low Voltage Network - (RD-C-1/4)-Z8-C014-LV | 2027-02-28 → 2027-08-07 (+160d) | 2027-03-01 → 2027-08-08 (+160d) |  |  |
| RHD4CZ8C014LV3200 | Cable Laying of Low Voltage Cables for Low Voltage Network - (RD-C-1/4)-Z8-C014-LV | 2027-03-02 → 2027-08-09 (+160d) | 2027-03-03 → 2027-08-10 (+160d) |  | resources Skilled labor [0.76 h]; Unskilled Labor [3.27 h]; Electrician [1.63 h]; Equipment Opreator [2.4 h]; Boom Truck [0.76 h]; Cable Laying Machine [1.63 h]; Cable, Copper 4x185mm2/ CU/XLPE/PVC [7.31 m]; Cable, Copper 4x50mm2/ CU/XLPE/PVC +1x25mm2 CU/PVC [6.17 m] → Skilled labor [0.8 h]; Unskilled Labor [3.27 h]; Electrician [1.6 h]; Equipment Opreator [2.4 h]; Boom Truck [0.8 h]; Cable Laying Machine [1.6 h]; Cable, Copper 4x185mm2/ CU/XLPE/PVC [7.31 m]; Cable, Copper 4x50mm2/ CU/XLPE/PVC +1x25mm2 CU/PVC [6.17 m] |
| RHD4CZ8C014LV3300 | Warning tape and Backfill for Low Voltage Cables for Low Voltage Network - (RD-C-1/4)-Z8-C014-LV | 2027-03-04 → 2027-08-11 (+160d) | 2027-03-06 → 2027-08-12 (+159d) |  | resources Skilled labor [0.76 h]; Unskilled Labor [3.27 h]; Electrician [1.63 h]; Equipment Opreator [0.76 h]; Boom Truck [0.76 h]; Cable, Copper 4x185mm2/ CU/XLPE/PVC [1.83 m]; Cable, Copper 4x50mm2/ CU/XLPE/PVC +1x25mm2 CU/PVC [1.54 m] → Skilled labor [0.8 h]; Unskilled Labor [3.27 h]; Electrician [1.6 h]; Equipment Opreator [0.8 h]; Boom Truck [0.8 h]; Cable, Copper 4x185mm2/ CU/XLPE/PVC [1.83 m]; Cable, Copper 4x50mm2/ CU/XLPE/PVC +1x25mm2 CU/PVC [1.54 m] |
| RHD4CZ8C014LV3400 | Testing of Low Voltage Cables for Low Voltage Network - (RD-C-1/4)-Z8-C014-LV | 2027-03-07 → 2027-08-14 (+160d) | 2027-03-08 → 2027-08-15 (+160d) |  |  |
| 7664 | **RHD4-02-002-C014-(LV)-Low Voltage Distribution Pillars** | 2027-03-13 → 2027-08-16 (+156d) | 2027-03-18 → 2027-08-22 (+157d) |  |  |
| RHD4CZ8C014LV4100 | Leveling for Distribution Pillars for Low Voltage Network - (RD-C-1/4)-Z8-C014-LV | 2027-03-13 → 2027-08-16 (+156d) | 2027-03-14 → 2027-08-17 (+156d) |  |  |
| RHD4CZ8C014LV4200 | Lean Concrete for Distribution Pillars for Low Voltage Network - (RD-C-1/4)-Z8-C014-LV | 2027-03-15 → 2027-08-18 (+156d) | 2027-03-16 → 2027-08-19 (+156d) |  | resources Skilled labor [3.59 h]; Unskilled Labor [7.3 h]; Equipment Opreator [1.42 h]; Concrete Mixer Truck [0.76 h]; Concrete Pump [0.76 h]; Supply and installation of KWH meter mounting frame including concrete block wall for installation of KWH meter according to the standards and specifications of SEC [0.25 Unit] → Skilled labor [3.59 h]; Unskilled Labor [7.3 h]; Equipment Opreator [1.42 h]; Concrete Mixer Truck [0.8 h]; Concrete Pump [0.8 h]; Supply and installation of KWH meter mounting frame including concrete block wall for installation of KWH meter according to the standards and specifications of SEC [0.25 Unit] |
| RHD4CZ8C014LV4300 | Installation of Distribution Pillars for Low Voltage Network - (RD-C-1/4)-Z8-C014-LV | 2027-03-17 → 2027-08-21 (+157d) | 2027-03-18 → 2027-08-22 (+157d) |  |  |
| 7666 | **RHD4-02-002-Z8-C014-Street Lighting Network - SL** | 2027-02-15 → 2027-07-10 (+145d) | 2027-05-09 → 2027-10-13 (+157d) |  |  |
| 7667 | **RHD4-02-002-C014-(SL)-Street Lighting duct banks** | 2027-02-15 → 2027-07-10 (+145d) | 2027-02-24 → 2027-07-18 (+144d) |  |  |
| RHD4CZ8C014SL2100 | Excavation of Duct Banks for Street Lighting Network - (RD-C-1/4)-Z8-C014-SL | 2027-02-15 → 2027-07-10 (+145d) | 2027-02-16 → 2027-07-11 (+145d) |  |  |
| RHD4CZ8C014SL2200 | Installation of Duct Banks for Street Lighting Network - (RD-C-1/4)-Z8-C014-SL | 2027-02-17 → 2027-07-12 (+145d) | 2027-02-18 → 2027-07-13 (+145d) |  |  |
| RHD4CZ8C014SL2300 | Pouring of Duct Banks for Street Lighting Network - (RD-C-1/4)-Z8-C014-SL | 2027-02-20 → 2027-07-14 (+144d) | 2027-02-21 → 2027-07-15 (+144d) |  |  |
| RHD4CZ8C014SL2400 | Backfilling of Duct Banks for Street Lighting Network - (RD-C-1/4)-Z8-C014-SL | 2027-02-23 → 2027-07-17 (+144d) | 2027-02-24 → 2027-07-18 (+144d) |  |  |
| 7668 | **RHD4-02-002-C014-(SL)-Street Lighting Drawpit** | 2027-03-20 → 2027-08-23 (+156d) | 2027-03-23 → 2027-08-26 (+156d) |  |  |
| RHD4CZ8C014SL5100 | Excavation of Drawpit size 600x600x900mm for Street Lighting Network - (RD-C-1/4)-Z8-C014-SL | 2027-03-20 → 2027-08-23 (+156d) | 2027-03-21 → 2027-08-24 (+156d) |  | resources Skilled labor [1.85 h]; Unskilled Labor [1.85 h]; Equipment Opreator [1.42 h]; Excavator-Poclain [0.76 h]; Dump Truck [0.76 h]; Drawpit with medium duty steel cover, size600x600x900mm, [0.3 Unit] → Skilled labor [1.85 h]; Unskilled Labor [1.85 h]; Equipment Opreator [1.42 h]; Excavator-Poclain [0.8 h]; Dump Truck [0.8 h]; Drawpit with medium duty steel cover, size600x600x900mm, [0.3 Unit] |
| RHD4CZ8C014SL5200 | Installation of Drawpit size 600x600x900mm for Street Lighting Network - (RD-C-1/4)-Z8-C014-SL | 2027-03-22 → 2027-08-25 (+156d) | 2027-03-23 → 2027-08-26 (+156d) |  | resources Skilled labor [1.85 h]; Unskilled Labor [1.85 h]; Equipment Opreator [0.76 h]; Boom Truck [0.76 h]; Drawpit with medium duty steel cover, size600x600x900mm, [1.7 Unit] → Skilled labor [1.85 h]; Unskilled Labor [1.85 h]; Equipment Opreator [0.8 h]; Boom Truck [0.8 h]; Drawpit with medium duty steel cover, size600x600x900mm, [1.7 Unit] |
| 7669 | **RHD4-02-002-C014-(SL)-Street Lighting cables** | 2027-03-24 → 2027-08-28 (+157d) | 2027-04-08 → 2027-09-12 (+157d) |  |  |
| RHD4CZ8C014SL3100 | Excavation for Street Lighting Cables for Street Lighting Network - (RD-C-1/4)-Z8-C014-SL | 2027-03-24 → 2027-08-28 (+157d) | 2027-03-28 → 2027-08-31 (+156d) |  |  |
| RHD4CZ8C014SL3200 | Cable Laying of Street Lighting Cables for Street Lighting Network - (RD-C-1/4)-Z8-C014-SL | 2027-03-29 → 2027-09-01 (+156d) | 2027-04-01 → 2027-09-05 (+157d) |  |  |
| RHD4CZ8C014SL3300 | Warning tape and Backfill for Street Lighting Cables for Street Lighting Network - (RD-C-1/4)-Z8-C014-SL | 2027-04-03 → 2027-09-06 (+156d) | 2027-04-06 → 2027-09-09 (+156d) |  |  |
| RHD4CZ8C014SL3400 | Testing of Street Lighting Cables for Street Lighting Network - (RD-C-1/4)-Z8-C014-SL | 2027-04-07 → 2027-09-11 (+157d) | 2027-04-08 → 2027-09-12 (+157d) |  |  |
| 7670 | **RHD4-02-002-C014-(SL)-Street Lighting Poles** | 2027-04-10 → 2027-09-13 (+156d) | 2027-04-29 → 2027-10-04 (+158d) |  |  |
| RHD4CZ8C014SL1100 | Excavation for RC Base for Lighting Poles for Street Lighting Network - (RD-C-1/4)-Z8-C014-SL | 2027-04-10 → 2027-09-13 (+156d) | 2027-04-12 → 2027-09-15 (+156d) |  |  |
| RHD4CZ8C014SL1200 | Installation for RC Base for Lighting Poles for Street Lighting Network - (RD-C-1/4)-Z8-C014-SL | 2027-04-13 → 2027-09-16 (+156d) | 2027-04-15 → 2027-09-19 (+157d) |  |  |
| RHD4CZ8C014SL1300 | Backfill for RC Base for Lighting Poles for Street Lighting Network - (RD-C-1/4)-Z8-C014-SL | 2027-04-17 → 2027-09-20 (+156d) | 2027-04-19 → 2027-09-22 (+156d) |  |  |
| RHD4CZ8C014SL1400 | Installation for Lighting Poles for Street Lighting Network - (RD-C-1/4)-Z8-C014-SL | 2027-04-20 → 2027-09-25 (+158d) | 2027-04-24 → 2027-09-28 (+157d) |  |  |
| RHD4CZ8C014SL1500 | Luminaire Installation for Lighting Poles for Street Lighting Network - (RD-C-1/4)-Z8-C014-SL | 2027-04-25 → 2027-09-29 (+157d) | 2027-04-29 → 2027-10-04 (+158d) |  |  |
| 7671 | **RHD4-02-002-C014-(SL)-Street Lighting Feeder Pillars** | 2027-05-01 → 2027-10-05 (+157d) | 2027-05-06 → 2027-10-11 (+158d) |  |  |
| RHD4CZ8C014SL4100 | Leveling for Distribution Pillars for Street Lighting Network - (RD-C-1/4)-Z8-C014-SL | 2027-05-01 → 2027-10-05 (+157d) | 2027-05-02 → 2027-10-06 (+157d) |  |  |
| RHD4CZ8C014SL4200 | Lean Concrete for Distribution Pillars for Street Lighting Network - (RD-C-1/4)-Z8-C014-SL | 2027-05-03 → 2027-10-07 (+157d) | 2027-05-04 → 2027-10-09 (+158d) |  |  |
| RHD4CZ8C014SL4300 | Installation of Distribution Pillars for Street Lighting Network - (RD-C-1/4)-Z8-C014-SL | 2027-05-05 → 2027-10-10 (+158d) | 2027-05-06 → 2027-10-11 (+158d) |  |  |
| 7672 | **RHD4-02-002-C014-(SL)-Street Lighting Earthing System** | 2027-05-08 → 2027-10-12 (+157d) | 2027-05-09 → 2027-10-13 (+157d) |  |  |
| RHD4CZ8C014SL6100 | Installation of Earthing for Lighting Poles and Fedder Pillers for Street Lighting Network - (RD-C-1/4)-Z8-C014-SL | 2027-05-08 → 2027-10-12 (+157d) | 2027-05-09 → 2027-10-13 (+157d) |  |  |
| 7678 | **RHD4-02-002-Z8-C014-Telecommunications Network - TC** | 2027-05-10 → 2027-10-14 (+157d) | 2027-06-12 → 2027-11-23 (+164d) |  |  |
| 7679 | **RHD4-02-002-C014-(TC)-Telecommunications Ducts** | 2027-05-10 → 2027-10-14 (+157d) | 2027-06-07 → 2027-11-18 (+164d) |  |  |
| RHD4CZ8C014TC2100 | Excavation of HDPE Ducts for Telecom Network - (RD-C-1/4)-Z8-C014-TC | 2027-05-10 → 2027-10-14 (+157d) | 2027-05-20 → 2027-10-20 (+153d) |  |  |
| RHD4CZ8C014TC2200 | Installation of HDPE Ducts for Telecom Network - (RD-C-1/4)-Z8-C014-TC | 2027-05-22 → 2027-10-21 (+152d) | 2027-05-31 → 2027-10-31 (+153d) |  | resources Carpenter [9.58 h]; Skilled labor [96.27 h]; Unskilled Labor [96.27 h]; Steel Fixer [9.58 h]; (6*50mm) HDPE ducts -TC [574.6 m] → Carpenter [9.6 h]; Skilled labor [96.27 h]; Unskilled Labor [96.27 h]; Steel Fixer [9.6 h]; (6*50mm) HDPE ducts -TC [574.6 m] |
| RHD4CZ8C014TC2400 | Backfilling of HDPE Ducts for Telecom Network - (RD-C-1/4)-Z8-C014-TC | 2027-06-01 → 2027-11-13 (+165d) | 2027-06-07 → 2027-11-18 (+164d) |  |  |
| 7680 | **RHD4-02-002-C014-(TC)-Telecommunications Manholes** | 2027-06-08 → 2027-11-20 (+165d) | 2027-06-12 → 2027-11-23 (+164d) |  |  |
| RHD4CZ8C014TC5100 | Excavation for Manholes for Telecom Network - (RD-C-1/4)-Z8-C014-TC | 2027-06-08 → 2027-11-20 (+165d) | 2027-06-09 → 2027-11-21 (+165d) |  |  |
| RHD4CZ8C014TC5200 | Installation of Manholes for Telecom Network - (RD-C-1/4)-Z8-C014-TC | 2027-06-10 → 2027-11-22 (+165d) | 2027-06-12 → 2027-11-23 (+164d) |  |  |
| 7682 | **RHD4-02-002-Z8-C014-Information and Communication Technologies - ICT** | 2027-06-13 → 2027-11-24 (+164d) | 2027-07-29 → 2028-01-10 (+165d) |  |  |
| 7683 | **RHD4-02-002-C014-(ICT)-Information and Communication Technologies Ducts** | 2027-06-13 → 2027-11-24 (+164d) | 2027-07-22 → 2028-01-03 (+165d) |  |  |
| RHD4CZ8C014ICT2100 | Excavation of HDPE Ducts for ICT Network - (RD-C-1/4)-Z8-C014-ICT | 2027-06-13 → 2027-11-24 (+164d) | 2027-06-23 → 2027-12-05 (+165d) |  |  |
| RHD4CZ8C014ICT2200 | Installation of HDPE Ducts for ICT Network - (RD-C-1/4)-Z8-C014-ICT | 2027-06-24 → 2027-12-06 (+165d) | 2027-07-11 → 2027-12-22 (+164d) |  |  |
| RHD4CZ8C014ICT2400 | Backfilling of HDPE Ducts for ICT Network - (RD-C-1/4)-Z8-C014-ICT | 2027-07-12 → 2027-12-23 (+164d) | 2027-07-22 → 2028-01-03 (+165d) |  |  |
| 7684 | **RHD4-02-002-C014-(ICT)-Information and Communication Technologies Manholes** | 2027-07-24 → 2028-01-04 (+164d) | 2027-07-29 → 2028-01-10 (+165d) |  |  |
| RHD4CZ8C014ICT5100 | Excavation for Manholes for ICT Network - (RD-C-1/4)-Z8-C014-ICT | 2027-07-24 → 2028-01-04 (+164d) | 2027-07-26 → 2028-01-06 (+164d) |  |  |
| RHD4CZ8C014ICT5200 | Installation of Manholes for ICT Network - (RD-C-1/4)-Z8-C014-ICT | 2027-07-27 → 2028-01-08 (+165d) | 2027-07-29 → 2028-01-10 (+165d) |  |  |
| 8459 | **RHD4-02-002-Z9** | 2026-08-17 → 2026-08-04 (-13d) | 2028-01-19 → 2028-09-03 (+228d) |  |  |
| 8649 | **RHD4-02-002-Z9-C071** | 2026-08-17 → 2026-08-04 (-13d) | 2028-01-19 → 2028-09-03 (+228d) |  |  |
| 8828 | **RHD4-02-002-Z9-C071-Road Works - RD** | 2026-09-07 → 2027-03-27 (+201d) | 2028-01-19 → 2028-09-03 (+228d) |  |  |
| 8829 | **RHD4-02-002-C071-(RD)-Subgrade** | 2026-09-07 → 2027-03-27 (+201d) | 2026-09-12 → 2027-04-10 (+210d) |  |  |
| RHD4CZ9C071RD1100 | Supply, lay and compaction subgrade compacted thickness 300 mm for Roads - (RD-C-7/1)-Z9-C071-RD | 2026-09-07 → 2027-03-27 (+201d) | 2026-09-12 → 2027-04-10 (+210d) | 5d → 13d | resources Skilled labor [132.86 h]; Unskilled Labor [265.83 h]; Electrician [132.86 h]; Equipment Opreator [907.71 h]; Water Truck [43.89 h]; Roller compactor [66.43 h]; Grader [132.86 h]; Dump Truck [664.53 h]; Subgrade [6392.22 m3] → Skilled labor [132.86 h]; Unskilled Labor [265.83 h]; Electrician [132.86 h]; Equipment Opreator [907.71 h]; Water Truck [43.89 h]; Roller compactor [66.4 h]; Grader [132.86 h]; Dump Truck [664.53 h]; Subgrade [6392.22 m3] |
| 8830 | **RHD4-02-002-C071-(RD)-Aggregate Base Course** | 2026-09-13 → 2027-04-11 (+210d) | 2026-09-24 → 2027-04-21 (+209d) |  |  |

| ID | Task | Start | Finish | Complete | Other |
| --- | --- | --- | --- | --- | --- |
| RHD4CZ9C071RD2100 | Supply, lay and compaction Aggregate base course compacted thickness 300 mmfor Roads - (RD-C-7/1)-Z9-C071-RD | 2026-09-13 → 2027-04-11 (+210d) | 2026-09-24 → 2027-04-21 (+209d) |  |  |
| 8831 | **RHD4-02-002-C071-(RD)-Bituminous base course Two Layers, including (MC1)&(RC2)** | 2026-09-26 → 2027-04-22 (+208d) | 2027-12-28 → 2028-08-12 (+228d) |  |  |
| RHD4CZ9C071RD3100 | Supply, lay and Asphaltic base course including Prime Coat (MC1) for 1st Layer - (RD-C-7/1)-Z9-C071-RD | 2026-09-26 → 2027-04-22 (+208d) | 2026-09-29 → 2027-04-26 (+209d) |  |  |
| RHD4CZ9C071RD3200 | Supply, lay and Asphaltic base course including Tack Coat (RC2) for 2nd Layer - (RD-C-7/1)-Z9-C071-RD | 2027-12-25 → 2028-08-08 (+227d) | 2027-12-28 → 2028-08-12 (+228d) |  |  |
| 8833 | **RHD4-02-002-C071-(RD)-Precast Concrete Curb** | 2027-12-29 → 2028-08-13 (+228d) | 2028-01-05 → 2028-08-20 (+228d) |  |  |
| RHD4CZ9C071RD5100 | Supply and installation Precast Concrete Kerb for Roads - (RD-C-7/1)-Z9-C071-RD | 2027-12-29 → 2028-08-13 (+228d) | 2028-01-05 → 2028-08-20 (+228d) |  |  |
| 8836 | **RHD4-02-002-C071-(RD)-Traffic Signage** | 2028-01-06 → 2028-08-21 (+228d) | 2028-01-13 → 2028-08-28 (+228d) |  |  |
| RHD4CZ9C071RD8100 | Installation of Traffic Signage for Road Network - (RD-C-7/1)-Z9-C071-RD | 2028-01-06 → 2028-08-21 (+228d) | 2028-01-13 → 2028-08-28 (+228d) |  |  |
| 8832 | **RHD4-02-002-C071-(RD)-Bituminous concrete wearing course including tack coat (RC2)** | 2028-01-15 → 2028-08-29 (+227d) | 2028-01-16 → 2028-08-30 (+227d) |  |  |
| RHD4CZ9C071RD4100 | Supply, lay and compaction Asphaltic wearing course including tack Coat (RC2)for Road Network - (RD-C-7/1)-Z9-C071-RD | 2028-01-15 → 2028-08-29 (+227d) | 2028-01-16 → 2028-08-30 (+227d) |  | resources Skilled labor [20.15 h]; Unskilled Labor [120.77 h]; Equipment Opreator [302.1 h]; Bobcat [20.15 h]; Roller compactor [20.15 h]; Asphalt Paver [20.15 h]; Rubber Compactor [40.29 h]; MC1/RC2 Sprinkler [20.15 h]; Dump Truck [181.22 h]; Bituminous concrete wearing course, (Grading I - Class A), including tack coat (RC2) [960.45 m3] → Skilled labor [20.15 h]; Unskilled Labor [120.8 h]; Equipment Opreator [302.1 h]; Bobcat [20.15 h]; Roller compactor [20.15 h]; Asphalt Paver [20.15 h]; Rubber Compactor [40.29 h]; MC1/RC2 Sprinkler [20.15 h]; Dump Truck [181.22 h]; Bituminous concrete wearing course, (Grading I - Class A), including tack coat (RC2) [960.45 m3] |
| 8835 | **RHD4-02-002-C071-(RD)-Pavement Marking** | 2028-01-17 → 2028-08-31 (+227d) | 2028-01-19 → 2028-09-03 (+228d) |  |  |
| RHD4CZ9C071RD7100 | Pavement Markings for Road Network - (RD-C-7/1)-Z9-C071-RD | 2028-01-17 → 2028-08-31 (+227d) | 2028-01-19 → 2028-09-03 (+228d) |  |  |
| 8653 | **RHD4-02-002-Z9-C071-Storm Network - ST** | 2026-10-17 → 2026-08-04 (-74d) | 2026-12-10 → 2027-04-05 (+116d) |  |  |
| 8672 | **RHD4-02-002-C071-(ST)-MH Works - 2000 mm diameter** | 2026-11-05 → 2026-08-29 (-68d) | 2026-12-05 → 2027-04-05 (+121d) |  |  |
| RHD4CZ9C071ST3102 | Excavation and PC Blinding works for MH 2000 mm - (RD-C-7/1)-Z9-C071-ST | 2026-11-05 → 2026-08-29 A (-68d) | 2026-11-10 → 2026-09-02 A (-69d) | 0% → 100% |  |
| RHD4CZ9C071ST3202 | Installation of Base for MH 2000 mm - (RD-C-7/1)-Z9-C071-ST | 2026-11-11 → 2027-03-13 (+122d) | 2026-11-17 → 2027-03-18 (+121d) |  |  |
| RHD4CZ9C071ST3302 | MH Ring and C.Slab works and Backfilling works for MH 2000 mm - (RD-C-7/1)-Z9-C071-ST | 2026-11-18 → 2027-03-20 (+122d) | 2026-11-24 → 2027-03-25 (+121d) |  |  |
| RHD4CZ9C071ST3402 | Steel Cover for MH 2000 mm - (RD-C-7/1)-Z9-C071-ST | 2026-11-25 → 2027-03-27 (+122d) | 2026-11-29 → 2027-03-30 (+121d) |  |  |
| RHD4CZ9C071ST3502 | Finishing, Benching, Testing works for MH 2000 mm - (RD-C-7/1)-Z9-C071-ST | 2026-11-30 → 2027-03-31 (+121d) | 2026-12-05 → 2027-04-05 (+121d) |  | resources Skilled labor [47.16 h]; Unskilled Labor [94.42 h]; Plumber [47.16 h]; Equipment Opreator [9.47 h]; Water Truck [9.47 h]; MH (2000mm Diameter) - ST - depth 2.51 - 3.5m [1 nr]; MH (2000mm Diameter) - ST - depth 3.51 -4.5m [0.2 nr] → Skilled labor [47.16 h]; Unskilled Labor [94.4 h]; Plumber [47.16 h]; Equipment Opreator [9.47 h]; Water Truck [9.47 h]; MH (2000mm Diameter) - ST - depth 2.51 - 3.5m [1 nr]; MH (2000mm Diameter) - ST - depth 3.51 -4.5m [0.2 nr] |
| 8670 | **RHD4-02-002-C071-(ST)-MH Works - 1200 mm diameter** | 2026-11-16 → 2026-09-12 (-65d) | 2026-12-10 → 2027-04-01 (+112d) |  |  |
| RHD4CZ9C071ST3100 | Excavation and PC Blinding works for MH 1200 mm - (RD-C-7/1)-Z9-C071-ST | 2026-11-16 → 2026-09-12 A (-65d) | 2026-11-19 → 2026-09-15 A (-65d) | 0% → 100% |  |
| RHD4CZ9C071ST3200 | Installation of Base for MH 1200 mm - (RD-C-7/1)-Z9-C071-ST | 2026-11-21 → 2027-03-13 (+112d) | 2026-11-25 → 2027-03-17 (+112d) |  |  |
| RHD4CZ9C071ST3300 | MH Ring and C.Slab works and Backfilling works for MH 1200 mm - (RD-C-7/1)-Z9-C071-ST | 2026-11-26 → 2027-03-18 (+112d) | 2026-12-01 → 2027-03-23 (+112d) |  |  |
| RHD4CZ9C071ST3400 | Steel Cover for MH 1200 mm - (RD-C-7/1)-Z9-C071-ST | 2026-12-02 → 2027-03-24 (+112d) | 2026-12-06 → 2027-03-28 (+112d) |  |  |
| RHD4CZ9C071ST3500 | Finishing, Benching, Testing works for MH 1200 mm - (RD-C-7/1)-Z9-C071-ST | 2026-12-07 → 2027-03-29 (+112d) | 2026-12-10 → 2027-04-01 (+112d) |  |  |
| 8671 | **RHD4-02-002-C071-(ST)-MH Works - 1500 mm diameter** | 2026-11-11 → 2026-08-04 (-99d) | 2026-12-01 → 2027-03-28 (+117d) |  |  |
| RHD4CZ9C071ST3101 | Excavation and PC Blinding works for MH 1500 mm - (RD-C-7/1)-Z9-C071-ST | 2026-11-11 → 2026-08-04 A (-99d) | 2026-11-15 → 2026-08-06 A (-101d) | 0% → 100% |  |
| RHD4CZ9C071ST3201 | Installation of Base for MH 1500 mm - (RD-C-7/1)-Z9-C071-ST | 2026-11-16 → 2027-03-13 (+117d) | 2026-11-19 → 2027-03-16 (+117d) |  |  |
| RHD4CZ9C071ST3301 | MH Ring and C.Slab works and Backfilling works for MH 1500 mm - (RD-C-7/1)-Z9-C071-ST | 2026-11-21 → 2027-03-17 (+116d) | 2026-11-24 → 2027-03-21 (+117d) |  |  |
| RHD4CZ9C071ST3401 | Steel Cover for MH 1500 mm - (RD-C-7/1)-Z9-C071-ST | 2026-11-25 → 2027-03-22 (+117d) | 2026-11-26 → 2027-03-23 (+117d) |  |  |
| RHD4CZ9C071ST3501 | Finishing, Benching, Testing works for MH 1500 mm - (RD-C-7/1)-Z9-C071-ST | 2026-11-28 → 2027-03-24 (+116d) | 2026-12-01 → 2027-03-28 (+117d) |  |  |
| 8661 | **RHD4-02-002-C071-(ST)-GRP Pipes - 1100 mm diameter** | 2026-10-17 → 2026-08-25 (-53d) | 2026-10-27 → 2027-03-14 (+138d) |  |  |
| RHD4CZ9C071ST1107 | Excavation works for GRP Pipe Line 1100 mm - (RD-C-7/1)-Z9-C071-ST | 2026-10-17 → 2026-08-25 A (-53d) | 2026-10-18 → 2026-08-26 A (-53d) | 0% → 100% |  |
| RHD4CZ9C071ST1207 | Bedding works for GRP Pipe Line 1100 mm - (RD-C-7/1)-Z9-C071-ST | 2026-10-19 → 2027-03-02 (+134d) | 2026-10-20 → 2027-03-03 (+134d) |  |  |
| RHD4CZ9C071ST1307 | Installing for GRP Pipe Line 1100 mm - (RD-C-7/1)-Z9-C071-ST | 2026-10-21 → 2027-03-04 (+134d) | 2026-10-22 → 2027-03-06 (+135d) |  |  |
| RHD4CZ9C071ST1407 | Primary Test for GRP Pipe Line 1100 mm - (RD-C-7/1)-Z9-C071-ST | 2026-10-24 → 2027-03-07 (+134d) | 2026-10-25 → 2027-03-08 (+134d) |  |  |
| RHD4CZ9C071ST1507 | Backfilling and warning tape works for GRP Pipe Line 1100 mm - (RD-C-7/1)-Z9-C071-ST | 2026-10-26 → 2027-03-13 (+138d) | 2026-10-27 → 2027-03-14 (+138d) |  |  |
| 8660 | **RHD4-02-002-C071-(ST)-GRP Pipes - 1000 mm diameter** | 2026-10-17 → 2026-08-18 (-60d) | 2026-10-31 → 2027-03-08 (+128d) |  |  |
| RHD4CZ9C071ST1106 | Excavation works for GRP Pipe Line 1000 mm - (RD-C-7/1)-Z9-C071-ST | 2026-10-17 → 2026-08-18 A (-60d) | 2026-10-19 → 2026-08-20 A (-60d) | 0% → 100% |  |
| RHD4CZ9C071ST1206 | Bedding works for GRP Pipe Line 1000 mm - (RD-C-7/1)-Z9-C071-ST | 2026-10-20 → 2026-08-20 A (-61d) | 2026-10-22 → 2026-08-23 A (-60d) | 0% → 100% |  |
| RHD4CZ9C071ST1306 | Installing for GRP Pipe Line 1000 mm - (RD-C-7/1)-Z9-C071-ST | 2026-10-24 → 2026-08-25 A (-60d) | 2026-10-25 → 2026-08-26 A (-60d) | 0% → 100% |  |
| RHD4CZ9C071ST1506 | Backfilling and warning tape works for GRP Pipe Line 1000 mm - (RD-C-7/1)-Z9-C071-ST | 2026-10-28 → 2026-08-27 A (-62d) | 2026-10-31 → 2026-09-19 A (-42d) | 0% → 100% |  |
| RHD4CZ9C071ST1406 | Primary Test for GRP Pipe Line 1000 mm - (RD-C-7/1)-Z9-C071-ST | 2026-10-26 → 2027-03-07 (+132d) | 2026-10-27 → 2027-03-08 (+132d) |  |  |
| 8659 | **RHD4-02-002-C071-(ST)-GRP Pipes - 900 mm diameter** | 2026-10-20 → 2026-08-17 (-64d) | 2026-11-02 → 2027-03-08 (+126d) |  |  |
| RHD4CZ9C071ST1105 | Excavation works for GRP Pipe Line 900 mm - (RD-C-7/1)-Z9-C071-ST | 2026-10-20 → 2026-08-17 A (-64d) | 2026-10-21 → 2026-08-18 A (-64d) | 0% → 100% | resources Skilled labor [19.17 h]; Unskilled Labor [19.17 h]; Equipment Opreator [23.09 h]; Excavator-Poclain [19.17 h]; Dump Truck [3.81 h]; GRP (900mm Diameter) - ST - Depth: 1.51m - 2.5m [9.83 m]; GRP (900mm Diameter) - ST - Depth: 2.51m - 3.5m [29.84 m] → Skilled labor [19.2 h]; Unskilled Labor [19.2 h]; Equipment Opreator [23.09 h]; Excavator-Poclain [19.2 h]; Dump Truck [3.81 h]; GRP (900mm Diameter) - ST - Depth: 1.51m - 2.5m [9.83 m]; GRP (900mm Diameter) - ST - Depth: 2.51m - 3.5m [29.84 m] |
| RHD4CZ9C071ST1205 | Bedding works for GRP Pipe Line 900 mm - (RD-C-7/1)-Z9-C071-ST | 2026-10-22 → 2026-08-19 A (-64d) | 2026-10-24 → 2026-08-20 A (-65d) | 0% → 100% | resources Skilled labor [19.17 h]; Unskilled Labor [38.44 h]; Equipment Opreator [38.44 h]; Excavator-Poclain [19.17 h]; Dump Truck [19.17 h]; GRP (900mm Diameter) - ST - Depth: 1.51m - 2.5m [3.28 m]; GRP (900mm Diameter) - ST - Depth: 2.51m - 3.5m [9.95 m] → Skilled labor [19.2 h]; Unskilled Labor [38.44 h]; Equipment Opreator [38.44 h]; Excavator-Poclain [19.2 h]; Dump Truck [19.2 h]; GRP (900mm Diameter) - ST - Depth: 1.51m - 2.5m [3.28 m]; GRP (900mm Diameter) - ST - Depth: 2.51m - 3.5m [9.95 m] |
| RHD4CZ9C071ST1305 | Installing for GRP Pipe Line 900 mm - (RD-C-7/1)-Z9-C071-ST | 2026-10-26 → 2026-08-22 A (-65d) | 2026-10-27 → 2026-08-23 A (-65d) | 0% → 100% |  |
| RHD4CZ9C071ST1505 | Backfilling and warning tape works for GRP Pipe Line 900 mm - (RD-C-7/1)-Z9-C071-ST | 2026-11-01 → 2026-08-24 A (-69d) | 2026-11-02 → 2026-08-25 A (-69d) | 0% → 100% | resources Skilled labor [19.17 h]; Unskilled Labor [38.44 h]; Equipment Opreator [38.44 h]; Excavator-Poclain [19.17 h]; Dump Truck [19.17 h]; GRP (900mm Diameter) - ST - Depth: 1.51m - 2.5m [13.11 m]; GRP (900mm Diameter) - ST - Depth: 2.51m - 3.5m [39.78 m] → Skilled labor [19.2 h]; Unskilled Labor [38.44 h]; Equipment Opreator [38.44 h]; Excavator-Poclain [19.2 h]; Dump Truck [19.2 h]; GRP (900mm Diameter) - ST - Depth: 1.51m - 2.5m [13.11 m]; GRP (900mm Diameter) - ST - Depth: 2.51m - 3.5m [39.78 m] |
| RHD4CZ9C071ST1405 | Primary Test for GRP Pipe Line 900 mm - (RD-C-7/1)-Z9-C071-ST | 2026-10-28 → 2027-03-07 (+130d) | 2026-10-29 → 2027-03-08 (+130d) |  | resources Unskilled Labor [9.58 h]; Plumber [9.58 h]; Equipment Opreator [9.58 h]; Water Truck [9.58 h]; GRP (900mm Diameter) - ST - Depth: 1.51m - 2.5m [13.11 m]; GRP (900mm Diameter) - ST - Depth: 2.51m - 3.5m [39.78 m] → Unskilled Labor [9.6 h]; Plumber [9.6 h]; Equipment Opreator [9.6 h]; Water Truck [9.6 h]; GRP (900mm Diameter) - ST - Depth: 1.51m - 2.5m [13.11 m]; GRP (900mm Diameter) - ST - Depth: 2.51m - 3.5m [39.78 m] |
| 8656 | **RHD4-02-002-C071-(ST)-GRP Pipes - 600 mm diameter** | 2026-10-22 → 2026-09-15 (-37d) | 2026-11-03 → 2027-03-16 (+133d) |  |  |
| RHD4CZ9C071ST1102 | Excavation works for GRP Pipe Line 600 mm - (RD-C-7/1)-Z9-C071-ST | 2026-10-22 → 2026-09-15 A (-37d) | 2026-10-24 → 2026-09-16 A (-38d) | 0% → 100% |  |
| RHD4CZ9C071ST1202 | Bedding works for GRP Pipe Line 600 mm - (RD-C-7/1)-Z9-C071-ST | 2026-10-25 → 2027-03-02 (+128d) | 2026-10-26 → 2027-03-03 (+128d) |  |  |
| RHD4CZ9C071ST1302 | Installing for GRP Pipe Line 600 mm - (RD-C-7/1)-Z9-C071-ST | 2026-10-28 → 2027-03-07 (+130d) | 2026-10-29 → 2027-03-08 (+130d) |  |  |
| RHD4CZ9C071ST1402 | Primary Test for GRP Pipe Line 600 mm - (RD-C-7/1)-Z9-C071-ST | 2026-10-31 → 2027-03-13 (+133d) | 2026-11-01 → 2027-03-14 (+133d) |  |  |
| RHD4CZ9C071ST1502 | Backfilling and warning tape works for GRP Pipe Line 600 mm - (RD-C-7/1)-Z9-C071-ST | 2026-11-02 → 2027-03-15 (+133d) | 2026-11-03 → 2027-03-16 (+133d) |  |  |
| 8655 | **RHD4-02-002-C071-(ST)-GRP Pipes - 500 mm diameter** | 2026-10-25 → 2026-08-29 (-57d) | 2026-11-04 → 2027-03-08 (+124d) |  |  |
| RHD4CZ9C071ST1101 | Excavation works for GRP Pipe Line 500 mm - (RD-C-7/1)-Z9-C071-ST | 2026-10-25 → 2026-08-29 A (-57d) | 2026-10-26 → 2026-08-30 A (-57d) | 0% → 100% |  |
| RHD4CZ9C071ST1201 | Bedding works for GRP Pipe Line 500 mm - (RD-C-7/1)-Z9-C071-ST | 2026-10-27 → 2026-09-15 A (-42d) | 2026-10-28 → 2026-09-19 A (-39d) | 0% → 100% |  |
| RHD4CZ9C071ST1301 | Installing for GRP Pipe Line 500 mm - (RD-C-7/1)-Z9-C071-ST | 2026-10-29 → 2026-09-16 A (-43d) | 2026-10-31 → 2027-03-03 (+123d) | 0% → 56% |  |
| RHD4CZ9C071ST1501 | Backfilling and warning tape works for GRP Pipe Line 500 mm - (RD-C-7/1)-Z9-C071-ST | 2026-11-03 → 2026-09-17 A (-47d) | 2026-11-04 → 2027-03-08 (+124d) | 0% → 55% |  |
| RHD4CZ9C071ST1401 | Primary Test for GRP Pipe Line 500 mm - (RD-C-7/1)-Z9-C071-ST | 2026-11-01 → 2027-03-04 (+123d) | 2026-11-02 → 2027-03-06 (+124d) |  |  |
| 8654 | **RHD4-02-002-C071-(ST)-GRP Pipes - 400 mm diameter** | 2026-10-27 → 2026-08-27 (-61d) | 2026-11-07 → 2027-03-03 (+116d) |  |  |
| RHD4CZ9C071ST1100 | Excavation works for GRP Pipe Line 400 mm - (RD-C-7/1)-Z9-C071-ST | 2026-10-27 → 2026-08-27 A (-61d) | 2026-10-28 → 2026-09-19 A (-39d) | 0% → 100% |  |
| RHD4CZ9C071ST1200 | Bedding works for GRP Pipe Line 400 mm - (RD-C-7/1)-Z9-C071-ST | 2026-10-29 → 2026-09-19 A (-40d) | 2026-10-31 → 2026-09-20 A (-41d) | 0% → 100% |  |
| RHD4CZ9C071ST1300 | Installing for GRP Pipe Line 400 mm - (RD-C-7/1)-Z9-C071-ST | 2026-11-01 → 2026-09-21 A (-41d) | 2026-11-02 → 2026-09-22 A (-41d) | 0% → 100% |  |
| RHD4CZ9C071ST1500 | Backfilling and warning tape works for GRP Pipe Line 400 mm - (RD-C-7/1)-Z9-C071-ST | 2026-11-05 → 2026-09-22 A (-44d) | 2026-11-07 → 2026-09-24 A (-44d) | 0% → 100% |  |
| RHD4CZ9C071ST1400 | Primary Test for GRP Pipe Line 400 mm - (RD-C-7/1)-Z9-C071-ST | 2026-11-03 → 2027-03-02 (+119d) | 2026-11-04 → 2027-03-03 (+119d) |  |  |
| 8668 | **RHD4-02-002-C071-(ST)-UPVC Pipes - 300 mm diameter** | 2026-10-29 → 2027-03-02 (+124d) | 2026-11-29 → 2027-04-05 (+127d) |  |  |
| RHD4CZ9C071ST2100 | Excavation works for UPVC Pipe Line 300 mm - (RD-C-7/1)-Z9-C071-ST | 2026-10-29 → 2027-03-02 (+124d) | 2026-11-04 → 2027-03-08 (+124d) |  |  |
| RHD4CZ9C071ST2200 | Bedding works for UPVC Pipe Line 300 mm - (RD-C-7/1)-Z9-C071-ST | 2026-11-05 → 2027-03-13 (+128d) | 2026-11-10 → 2027-03-17 (+127d) |  |  |

| ID | Task | Start | Finish | Complete | Other |
| --- | --- | --- | --- | --- | --- |
| RHD4CZ9C071ST2300 | Installing for UPVC Pipe Line 300 mm - (RD-C-7/1)-Z9-C071-ST | 2026-11-11 → 2027-03-18 (+127d) | 2026-11-17 → 2027-03-24 (+127d) |  | resources Unskilled Labor [112.82 h]; Plumber [56.41 h]; UPVC (300mm Diameter) - ST - Depth less than 1.5 [522.5 m]; UPVC (300mm Diameter) - ST - Depth: 1.51m - 2.5m [64.13 m] → Unskilled Labor [112.8 h]; Plumber [56.41 h]; UPVC (300mm Diameter) - ST - Depth less than 1.5 [522.5 m]; UPVC (300mm Diameter) - ST - Depth: 1.51m - 2.5m [64.13 m] |
| RHD4CZ9C071ST2400 | Primary Test for UPVC Pipe Line 300 mm - (RD-C-7/1)-Z9-C071-ST | 2026-11-18 → 2027-03-25 (+127d) | 2026-11-22 → 2027-03-29 (+127d) |  |  |
| RHD4CZ9C071ST2500 | Backfilling and warning tape works for UPVC Pipe Line 300 mm - (RD-C-7/1)-Z9-C071-ST | 2026-11-23 → 2027-03-30 (+127d) | 2026-11-29 → 2027-04-05 (+127d) |  |  |
| 8676 | **RHD4-02-002-C071-(ST)-Concrete Encasement** | 2026-11-16 → 2027-03-23 (+127d) | 2026-11-17 → 2027-03-24 (+127d) |  |  |
| RHD4CZ9C071ST6100 | Pipe Encasement for Storm Pipelines - (RD-C-7/1)-Z9-C071-ST | 2026-11-16 → 2027-03-23 (+127d) | 2026-11-17 → 2027-03-24 (+127d) |  |  |
| 8677 | **RHD4-02-002-Z9-C071-Catch Basin - ST** | 2026-12-02 → 2026-10-27 (-36d) | 2027-01-19 → 2027-05-04 (+105d) |  |  |
| 8678 | **RHD4-02-002-C071-(ST)-Single Catch Basin Works** | 2026-12-02 → 2026-10-27 (-36d) | 2027-01-19 → 2027-05-04 (+105d) |  |  |
| RHD4CZ9C071ST7100 | Excavation works for Single Catch Basin - (RD-C-7/1)-Z9-C071-ST | 2026-12-02 → 2026-10-27 A (-36d) | 2026-12-09 → 2027-03-31 (+112d) | 0% → 75% | resources Skilled labor [66.43 h]; Unskilled Labor [132.86 h]; Equipment Opreator [99.65 h]; Excavator-Poclain [66.43 h]; Dump Truck [33.22 h]; Single Catch basin - ST [15.25 nr] → Skilled labor [66.4 h]; Unskilled Labor [132.86 h]; Equipment Opreator [99.65 h]; Excavator-Poclain [66.4 h]; Dump Truck [33.22 h]; Single Catch basin - ST [15.25 nr] |
| RHD4CZ9C071ST7200 | PC Blinding, Installation and Pipe connection for Single Catch Basin - (RD-C-7/1)-Z9-C071-ST | 2026-12-10 → 2026-10-29 A (-42d) | 2026-12-17 → 2027-04-05 (+109d) | 0% → 75% | resources Skilled labor [66.43 h]; Unskilled Labor [132.86 h]; Plumber [33.22 h]; Equipment Opreator [13.29 h]; Boom Truck [13.29 h]; Single Catch basin - ST [12.2 nr] → Skilled labor [66.4 h]; Unskilled Labor [132.86 h]; Plumber [33.22 h]; Equipment Opreator [13.29 h]; Boom Truck [13.29 h]; Single Catch basin - ST [12.2 nr] |
| RHD4CZ9C071ST7300 | Rings & C.Slab & Final Backfill for Single Catch Basin - (RD-C-7/1)-Z9-C071-ST | 2026-12-19 → 2026-10-31 A (-49d) | 2026-12-27 → 2027-04-11 (+105d) | 0% → 67% |  |
| RHD4CZ9C071ST7400 | Steel Cover for Single Catch Basin - (RD-C-7/1)-Z9-C071-ST | 2026-12-28 → 2027-04-12 (+105d) | 2027-01-04 → 2027-04-19 (+105d) |  | resources Skilled labor [66.43 h]; Unskilled Labor [66.43 h]; Equipment Opreator [13.29 h]; Boom Truck [13.29 h]; Single Catch basin - ST [3.05 nr] → Skilled labor [66.4 h]; Unskilled Labor [66.4 h]; Equipment Opreator [13.29 h]; Boom Truck [13.29 h]; Single Catch basin - ST [3.05 nr] |
| RHD4CZ9C071ST7500 | Finishing and Insulation works for Single Catch Basin - (RD-C-7/1)-Z9-C071-ST | 2027-01-05 → 2027-04-20 (+105d) | 2027-01-19 → 2027-05-04 (+105d) |  |  |
| 8702 | **RHD4-02-002-Z9-C071-Sewage Network - SW** | 2027-01-05 → 2026-08-16 (-142d) | 2027-02-24 → 2027-06-13 (+109d) |  |  |
| 1895 | **RHD4-02-002-C071-(SW)-GRP Pipes - 500 mm diameter** | 2027-01-05 → 2026-08-16 (-142d) | 2027-01-27 → 2027-05-12 (+105d) |  |  |
| RHD4CZ9C071SW1102 | Excavation works for GRP Pipe Line 500 mm - (RD-C-7/1)-Z9-C071-SW | 2027-01-05 → 2026-08-16 A (-142d) | 2027-01-09 → 2027-04-24 (+105d) | 0% → 24% |  |
| RHD4CZ9C071SW1202 | Bedding works for GRP Pipe Line 500 mm - (RD-C-7/1)-Z9-C071-SW | 2027-01-10 → 2027-04-25 (+105d) | 2027-01-13 → 2027-04-28 (+105d) |  |  |
| RHD4CZ9C071SW1302 | Installing for GRP Pipe Line 500 mm - (RD-C-7/1)-Z9-C071-SW | 2027-01-14 → 2027-04-29 (+105d) | 2027-01-18 → 2027-05-03 (+105d) |  |  |
| RHD4CZ9C071SW1402 | Primary Test for GRP Pipe Line 500 mm - (RD-C-7/1)-Z9-C071-SW | 2027-01-19 → 2027-05-04 (+105d) | 2027-01-23 → 2027-05-08 (+105d) |  |  |
| RHD4CZ9C071SW1502 | Backfilling and warning tape works for GRP Pipe Line 500 mm - (RD-C-7/1)-Z9-C071-SW | 2027-01-24 → 2027-05-09 (+105d) | 2027-01-27 → 2027-05-12 (+105d) |  |  |
| 3794 | **RHD4-02-002-C071-(SW)-MH Works - 1200 mm diameter** | 2027-01-10 → 2027-04-25 (+105d) | 2027-02-24 → 2027-06-13 (+109d) |  |  |
| RHD4CZ9C071SW3100 | Excavation and PC Blinding works for MH 1200 mm - (RD-C-7/1)-Z9-C071-SW | 2027-01-10 → 2027-04-25 (+105d) | 2027-01-14 → 2027-04-29 (+105d) |  | resources Skilled labor [54.45 h]; Unskilled Labor [54.45 h]; Equipment Opreator [87.12 h]; Excavator-Poclain [54.45 h]; Water Truck [5.45 h]; Dump Truck [27.23 h]; MH (1200mm Diameter) - SW - depth 3.51 -4.5m [1.75 nr]; MH (1200mm Diameter) - SW - depth 4.51 -5.5m [0.75 nr] → Skilled labor [54.45 h]; Unskilled Labor [54.45 h]; Equipment Opreator [87.12 h]; Excavator-Poclain [54.45 h]; Water Truck [5.45 h]; Dump Truck [27.2 h]; MH (1200mm Diameter) - SW - depth 3.51 -4.5m [1.75 nr]; MH (1200mm Diameter) - SW - depth 4.51 -5.5m [0.75 nr] |
| RHD4CZ9C071SW3200 | Installation of Base for MH 1200 mm - (RD-C-7/1)-Z9-C071-SW | 2027-01-16 → 2027-05-01 (+105d) | 2027-01-26 → 2027-05-11 (+105d) |  |  |
| RHD4CZ9C071SW3300 | MH Ring and C.Slab works and Backfilling works for MH 1200 mm - (RD-C-7/1)-Z9-C071-SW | 2027-01-27 → 2027-05-12 (+105d) | 2027-02-07 → 2027-05-27 (+109d) |  |  |
| RHD4CZ9C071SW3400 | Steel Cover for MH 1200 mm - (RD-C-7/1)-Z9-C071-SW | 2027-02-08 → 2027-05-29 (+110d) | 2027-02-11 → 2027-06-01 (+110d) |  |  |
| RHD4CZ9C071SW3500 | Finishing, Benching, Testing works for MH 1200 mm - (RD-C-7/1)-Z9-C071-SW | 2027-02-13 → 2027-06-02 (+109d) | 2027-02-24 → 2027-06-13 (+109d) |  |  |
| 8739 | **RHD4-02-002-Z9-C071-Potable Network - PT** | 2027-01-28 → 2027-05-13 (+105d) | 2027-02-21 → 2027-06-10 (+109d) |  |  |
| 8742 | **RHD4-02-002-C071-(PT)-HDPE Pipes - 200 mm diameter** | 2027-01-28 → 2027-05-13 (+105d) | 2027-02-09 → 2027-05-30 (+110d) |  |  |
| RHD4CZ9C071PT1102 | Excavation works for HDPE Pipline 200 mm - (RD-C-7/1)-Z9-C071-PT | 2027-01-28 → 2027-05-13 (+105d) | 2027-01-30 → 2027-05-19 (+109d) |  |  |
| RHD4CZ9C071PT1202 | Bedding works for HDPE Pipline 200 mm - (RD-C-7/1)-Z9-C071-PT | 2027-01-31 → 2027-05-20 (+109d) | 2027-02-01 → 2027-05-22 (+110d) |  |  |
| RHD4CZ9C071PT1302 | Installing for HDPE Pipline 200 mm - (RD-C-7/1)-Z9-C071-PT | 2027-02-02 → 2027-05-23 (+110d) | 2027-02-04 → 2027-05-25 (+110d) |  |  |
| RHD4CZ9C071PT1402 | Primary Test for HDPE Pipline 200 mm - (RD-C-7/1)-Z9-C071-PT | 2027-02-06 → 2027-05-26 (+109d) | 2027-02-07 → 2027-05-27 (+109d) |  |  |
| RHD4CZ9C071PT1502 | Backfilling and warning tape works for HDPE Pipline 200 mm - (RD-C-7/1)-Z9-C071-PT | 2027-02-08 → 2027-05-29 (+110d) | 2027-02-09 → 2027-05-30 (+110d) |  |  |
| 8741 | **RHD4-02-002-C071-(PT)-HDPE Pipes - 160 mm diameter** | 2027-01-31 → 2027-05-20 (+109d) | 2027-02-18 → 2027-06-08 (+110d) |  |  |
| RHD4CZ9C071PT1101 | Excavation works for HDPE Pipline 160 mm - (RD-C-7/1)-Z9-C071-PT | 2027-01-31 → 2027-05-20 (+109d) | 2027-02-02 → 2027-05-23 (+110d) |  |  |
| RHD4CZ9C071PT1201 | Bedding works for HDPE Pipline 160 mm - (RD-C-7/1)-Z9-C071-PT | 2027-02-03 → 2027-05-24 (+110d) | 2027-02-06 → 2027-05-26 (+109d) |  |  |
| RHD4CZ9C071PT1301 | Installing for HDPE Pipline 160 mm - (RD-C-7/1)-Z9-C071-PT | 2027-02-07 → 2027-05-27 (+109d) | 2027-02-11 → 2027-06-01 (+110d) |  |  |
| RHD4CZ9C071PT1401 | Primary Test for HDPE Pipline 160 mm - (RD-C-7/1)-Z9-C071-PT | 2027-02-13 → 2027-06-02 (+109d) | 2027-02-14 → 2027-06-03 (+109d) |  |  |
| RHD4CZ9C071PT1501 | Backfilling and warning tape works for HDPE Pipline 160 mm - (RD-C-7/1)-Z9-C071-PT | 2027-02-15 → 2027-06-05 (+110d) | 2027-02-18 → 2027-06-08 (+110d) |  |  |
| 8745 | **RHD4-02-002-C071-(PT)-Gate Valves (Direct Buried)** | 2027-02-03 → 2027-05-24 (+110d) | 2027-02-21 → 2027-06-10 (+109d) |  |  |
| RHD4CZ9C071PT3100 | Installation for Direct Buried Gate Valves - (RD-C-7/1)-Z9-C071-PT | 2027-02-03 → 2027-05-24 (+110d) | 2027-02-04 → 2027-05-25 (+110d) |  |  |
| RHD4CZ9C071PT3200 | Stem and Service box for Direct Buried Gate Valves - (RD-C-7/1)-Z9-C071-PT | 2027-02-20 → 2027-06-09 (+109d) | 2027-02-21 → 2027-06-10 (+109d) |  |  |
| 8748 | **RHD4-02-002-C071-(PT)-Wash out Valve Chambers** | 2027-01-31 → 2027-05-20 (+109d) | 2027-02-08 → 2027-05-29 (+110d) |  |  |
| RHD4CZ9C071PT2101 | Excavation and Bedding for Wash out Valve Chambers for Potable Water Network - (RD-C-7/1)-Z9-C071-PT | 2027-01-31 → 2027-05-20 (+109d) | 2027-02-01 → 2027-05-22 (+110d) |  |  |
| RHD4CZ9C071PT2201 | PC works for Wash out Valve Chambers for Potable Water Network - (RD-C-7/1)-Z9-C071-PT | 2027-02-02 → 2027-05-23 (+110d) | 2027-02-03 → 2027-05-24 (+110d) |  |  |
| RHD4CZ9C071PT2301 | Installation for Wash out Valve Chambers for Potable Water Network - (RD-C-7/1)-Z9-C071-PT | 2027-02-04 → 2027-05-25 (+110d) | 2027-02-06 → 2027-05-26 (+109d) |  |  |
| RHD4CZ9C071PT2401 | Backfilling works for Wash out Valve Chambers for Potable Water Network - (RD-C-7/1)-Z9-C071-PT | 2027-02-07 → 2027-05-27 (+109d) | 2027-02-08 → 2027-05-29 (+110d) |  |  |
| 8749 | **RHD4-02-002-C071-(PT)-Wash out Valves** | 2027-02-07 → 2027-05-27 (+109d) | 2027-02-10 → 2027-05-31 (+110d) |  |  |
| RHD4CZ9C071PT3102 | Installation for Wash out Valves for Potable Water Network - (RD-C-7/1)-Z9-C071-PT | 2027-02-07 → 2027-05-27 (+109d) | 2027-02-08 → 2027-05-29 (+110d) |  |  |
| RHD4CZ9C071PT3202 | Stem and Service box for Wash out Valves for Potable Water Network - (RD-C-7/1)-Z9-C071-PT | 2027-02-09 → 2027-05-30 (+110d) | 2027-02-10 → 2027-05-31 (+110d) |  |  |
| 8750 | **RHD4-02-002-C071-(PT)-Air Valve Chambers** | 2027-02-02 → 2027-05-23 (+110d) | 2027-02-10 → 2027-05-31 (+110d) |  |  |
| RHD4CZ9C071PT2102 | Excavation and Bedding for Air Valve Chambers for Potable Water Network - (RD-C-7/1)-Z9-C071-PT | 2027-02-02 → 2027-05-23 (+110d) | 2027-02-03 → 2027-05-24 (+110d) |  |  |
| RHD4CZ9C071PT2202 | PC works for Air Valve Chambers for Potable Water Network - (RD-C-7/1)-Z9-C071-PT | 2027-02-04 → 2027-05-25 (+110d) | 2027-02-06 → 2027-05-26 (+109d) |  |  |
| RHD4CZ9C071PT2302 | Installation for Air Valve Chambers for Potable Water Network - (RD-C-7/1)-Z9-C071-PT | 2027-02-07 → 2027-05-27 (+109d) | 2027-02-08 → 2027-05-29 (+110d) |  |  |
| RHD4CZ9C071PT2402 | Backfilling works for Air Valve Chambers for Potable Water Network - (RD-C-7/1)-Z9-C071-PT | 2027-02-09 → 2027-05-30 (+110d) | 2027-02-10 → 2027-05-31 (+110d) |  |  |
| 8751 | **RHD4-02-002-C071-(PT)-Air Valves** | 2027-01-31 → 2027-05-20 (+109d) | 2027-02-03 → 2027-05-24 (+110d) |  |  |
| RHD4CZ9C071PT3103 | Installation for Air Valves for Potable Water Network - (RD-C-7/1)-Z9-C071-PT | 2027-01-31 → 2027-05-20 (+109d) | 2027-02-01 → 2027-05-22 (+110d) |  |  |
| RHD4CZ9C071PT3203 | Stem and Service box for Air Valves for Potable Water Network - (RD-C-7/1)-Z9-C071-PT | 2027-02-02 → 2027-05-23 (+110d) | 2027-02-03 → 2027-05-24 (+110d) |  |  |
| 8752 | **RHD4-02-002-C071-(PT)-Fire Hydrant** | 2027-02-04 → 2027-05-25 (+110d) | 2027-02-16 → 2027-06-06 (+110d) |  |  |
| RHD4CZ9C071PT4100 | Excavation and Bedding and Pipe Installation for Fire Hydrant - (RD-C-7/1)-Z9-C071-PT | 2027-02-04 → 2027-05-25 (+110d) | 2027-02-07 → 2027-05-27 (+109d) |  |  |
| RHD4CZ9C071PT4200 | Valve Installation for Fire Hydrant - (RD-C-7/1)-Z9-C071-PT | 2027-02-08 → 2027-05-29 (+110d) | 2027-02-09 → 2027-05-30 (+110d) |  |  |
| RHD4CZ9C071PT4300 | Stem for Fire Hydrant - (RD-C-7/1)-Z9-C071-PT | 2027-02-10 → 2027-05-31 (+110d) | 2027-02-11 → 2027-06-01 (+110d) |  |  |
| RHD4CZ9C071PT4400 | Fire Installation for Fire Hydrant - (RD-C-7/1)-Z9-C071-PT | 2027-02-13 → 2027-06-02 (+109d) | 2027-02-14 → 2027-06-03 (+109d) |  |  |
| RHD4CZ9C071PT4500 | Protection Barriers for Fire Hydrant - (RD-C-7/1)-Z9-C071-PT | 2027-02-15 → 2027-06-05 (+110d) | 2027-02-16 → 2027-06-06 (+110d) |  |  |
| 8754 | **RHD4-02-002-Z9-C071-Irrigation Network - IRR** | 2027-02-11 → 2027-06-01 (+110d) | 2027-03-08 → 2027-06-24 (+108d) |  |  |
| 8762 | **RHD4-02-002-C071-(IRR)-HDPE Pipes - 500 mm diameter** | 2027-02-11 → 2027-06-01 (+110d) | 2027-03-07 → 2027-06-23 (+108d) |  |  |
| RHD4CZ9C071IRR1107 | Excavation works for HDPE Pipline 500 mm - (RD-C-7/1)-Z9-C071-IRR | 2027-02-11 → 2027-06-01 (+110d) | 2027-02-16 → 2027-06-06 (+110d) |  | resources Skilled labor [48.57 h]; Unskilled Labor [48.57 h]; Equipment Opreator [58.37 h]; Excavator-Poclain [48.57 h]; Dump Truck [9.69 h]; HDPE (500mm Diameter) - TSE - Depth: less than 1.5m [64.51 m]; HDPE (500mm Diameter) - TSE - Depth: more than 1.51m [3.68 m] → Skilled labor [48.57 h]; Unskilled Labor [48.57 h]; Equipment Opreator [58.4 h]; Excavator-Poclain [48.57 h]; Dump Truck [9.69 h]; HDPE (500mm Diameter) - TSE - Depth: less than 1.5m [64.51 m]; HDPE (500mm Diameter) - TSE - Depth: more than 1.51m [3.68 m] |
| RHD4CZ9C071IRR1207 | Bedding works for HDPE Pipline 500 mm - (RD-C-7/1)-Z9-C071-IRR | 2027-02-17 → 2027-06-07 (+110d) | 2027-02-21 → 2027-06-10 (+109d) |  |  |
| RHD4CZ9C071IRR1307 | Installing for HDPE Pipline 500 mm - (RD-C-7/1)-Z9-C071-IRR | 2027-02-23 → 2027-06-12 (+109d) | 2027-02-28 → 2027-06-16 (+108d) |  |  |
| RHD4CZ9C071IRR1407 | Primary Test for HDPE Pipline 500 mm - (RD-C-7/1)-Z9-C071-IRR | 2027-03-01 → 2027-06-17 (+108d) | 2027-03-02 → 2027-06-19 (+109d) |  |  |
| RHD4CZ9C071IRR1507 | Backfilling and warning tape works for HDPE Pipline 500 mm - (RD-C-7/1)-Z9-C071-IRR | 2027-03-03 → 2027-06-20 (+109d) | 2027-03-07 → 2027-06-23 (+108d) |  |  |

| ID | Task | Start | Finish | Duration | Other |
| --- | --- | --- | --- | --- | --- |
| 8755 | **RHD4-02-002-C071-(IRR)-HDPE Pipes - 160 mm diameter** | 2027-02-17 → 2027-06-07 (+110d) | 2027-03-08 → 2027-06-24 (+108d) |  |  |
| RHD4CZ9C071IRR1100 | Excavation works for HDPE Pipline 160 mm - (RD-C-7/1)-Z9-C071-IRR | 2027-02-17 → 2027-06-07 (+110d) | 2027-02-21 → 2027-06-10 (+109d) |  |  |
| RHD4CZ9C071IRR1200 | Bedding works for HDPE Pipline 160 mm - (RD-C-7/1)-Z9-C071-IRR | 2027-02-23 → 2027-06-12 (+109d) | 2027-02-25 → 2027-06-14 (+109d) |  |  |
| RHD4CZ9C071IRR1300 | Installing for HDPE Pipline 160 mm - (RD-C-7/1)-Z9-C071-IRR | 2027-02-27 → 2027-06-15 (+108d) | 2027-03-02 → 2027-06-19 (+109d) |  |  |
| RHD4CZ9C071IRR1400 | Primary Test for HDPE Pipline 160 mm - (RD-C-7/1)-Z9-C071-IRR | 2027-03-03 → 2027-06-20 (+109d) | 2027-03-04 → 2027-06-21 (+109d) |  |  |
| RHD4CZ9C071IRR1500 | Backfilling and warning tape works for HDPE Pipline 160 mm - (RD-C-7/1)-Z9-C071-IRR | 2027-03-06 → 2027-06-22 (+108d) | 2027-03-08 → 2027-06-24 (+108d) |  |  |
| 6116 | **RHD4-02-002-C071-(IRR)-Butterfly Valve Chamber** | 2027-02-23 → 2027-06-12 (+109d) | 2027-03-03 → 2027-06-20 (+109d) |  |  |
| RHD4CZ9C071IRR2100 | Excavation and Bedding for Butterfly Valve Chamber for Irrigation Network - (RD-C-7/1)-Z9-C071-IRR | 2027-02-23 → 2027-06-12 (+109d) | 2027-02-24 → 2027-06-13 (+109d) |  |  |
| RHD4CZ9C071IRR2200 | PC works for Butterfly Valve Chamber for Irrigation Network - (RD-C-7/1)-Z9-C071-IRR | 2027-02-25 → 2027-06-14 (+109d) | 2027-02-27 → 2027-06-15 (+108d) |  |  |
| RHD4CZ9C071IRR2300 | Installation for Butterfly Valve Chamber for Irrigation Network - (RD-C-7/1)-Z9-C071-IRR | 2027-02-28 → 2027-06-16 (+108d) | 2027-03-01 → 2027-06-17 (+108d) |  |  |
| RHD4CZ9C071IRR2400 | Backfilling works for Butterfly Valve Chamber for Irrigation Network - (RD-C-7/1)-Z9-C071-IRR | 2027-03-02 → 2027-06-19 (+109d) | 2027-03-03 → 2027-06-20 (+109d) |  |  |
| 6117 | **RHD4-02-002-C071-(IRR)-Butterfly Valves** | 2027-03-03 → 2027-06-20 (+109d) | 2027-03-07 → 2027-06-23 (+108d) |  |  |
| RHD4CZ9C071IRR3101 | Installation for Butterfly Valves for Irrigation Network - (RD-C-7/1)-Z9-C071-IRR | 2027-03-03 → 2027-06-20 (+109d) | 2027-03-04 → 2027-06-21 (+109d) |  |  |
| RHD4CZ9C071IRR3201 | Stem and Service box for Butterfly Valves for Irrigation Network - (RD-C-7/1)-Z9-C071-IRR | 2027-03-06 → 2027-06-22 (+108d) | 2027-03-07 → 2027-06-23 (+108d) |  |  |
| 8788 | **RHD4-02-002-Z9-C071-Medium Voltage Network - MV** | 2026-09-30 → 2027-04-27 (+209d) | 2026-11-16 → 2027-06-17 (+213d) |  |  |
| 8789 | **RHD4-02-002-C071-(MV)-Medium Voltage cable trench** | 2026-09-30 → 2027-04-27 (+209d) | 2026-11-16 → 2027-06-17 (+213d) |  |  |
| RHD4CZ9C071MV1100 | Excavation for Medium Voltage Trench - (RD-C-7/1)-Z9-C071-MV | 2026-09-30 → 2027-04-27 (+209d) | 2026-10-10 → 2027-05-06 (+208d) |  | resources Skilled labor [97.14 h]; Unskilled Labor [194.39 h]; Equipment Opreator [291.53 h]; Excavator-Poclain [97.14 h]; Dump Truck [194.39 h]; Excavation for Trench size 40cm wide and 80cm deep ( for 1 cables) [288.39 m3]; Excavation for Trench size 60cm wide and 80cm deep ( for 2 cables) [199.3 m3]; Excavation for Trench size 120cm wide and 80cm deep (for 4 cables) [59.35 m3]; Excavation for Trench size 180cm wide and 80cm deep (for 6 cables) [77.56 m3] → Skilled labor [97.14 h]; Unskilled Labor [194.4 h]; Equipment Opreator [291.53 h]; Excavator-Poclain [97.14 h]; Dump Truck [194.4 h]; Excavation for Trench size 40cm wide and 80cm deep ( for 1 cables) [288.39 m3]; Excavation for Trench size 60cm wide and 80cm deep ( for 2 cables) [199.3 m3]; Excavation for Trench size 120cm wide and 80cm deep (for 4 cables) [59.35 m3]; Excavation for Trench size 180cm wide and 80cm deep (for 6 cables) [77.56 m3] |
| RHD4CZ9C071MV1200 | Trench Backfilling for Medium Voltage Network - (RD-C-7/1)-Z9-C071-MV | 2026-11-07 → 2027-06-08 (+213d) | 2026-11-16 → 2027-06-17 (+213d) |  | resources Skilled labor [97.14 h]; Unskilled Labor [97.14 h]; Equipment Opreator [194.39 h]; Dump Truck [194.39 h]; Excavation for Trench size 40cm wide and 80cm deep ( for 1 cables) [123.6 m3]; Excavation for Trench size 60cm wide and 80cm deep ( for 2 cables) [85.42 m3]; Excavation for Trench size 120cm wide and 80cm deep (for 4 cables) [25.44 m3]; Excavation for Trench size 180cm wide and 80cm deep (for 6 cables) [33.24 m3] → Skilled labor [97.14 h]; Unskilled Labor [97.14 h]; Equipment Opreator [194.4 h]; Dump Truck [194.4 h]; Excavation for Trench size 40cm wide and 80cm deep ( for 1 cables) [123.6 m3]; Excavation for Trench size 60cm wide and 80cm deep ( for 2 cables) [85.42 m3]; Excavation for Trench size 120cm wide and 80cm deep (for 4 cables) [25.44 m3]; Excavation for Trench size 180cm wide and 80cm deep (for 6 cables) [33.24 m3] |
| 8790 | **RHD4-02-002-C071-(MV)-Medium Voltage duct banks** | 2026-10-11 → 2027-05-08 (+209d) | 2026-10-29 → 2027-05-31 (+214d) |  |  |
| RHD4CZ9C071MV2100 | Excavation of Duct Banks for Medium Voltage Network - (RD-C-7/1)-Z9-C071-MV | 2026-10-11 → 2027-05-08 (+209d) | 2026-10-14 → 2027-05-11 (+209d) |  |  |
| RHD4CZ9C071MV2200 | Installation of Duct Banks for Medium Voltage Network - (RD-C-7/1)-Z9-C071-MV | 2026-10-15 → 2027-05-12 (+209d) | 2026-10-21 → 2027-05-23 (+214d) |  | resources Unskilled Labor [55.98 h]; Equipment Opreator [112.06 h]; Excavator-Poclain [55.98 h]; Dump Truck [55.98 h]; Duct bank for MV cables UPVC (4xø150mm) [2.36 m]; Duct bank for MV cables UPVC (6xø150mm) [2.79 m] → Unskilled Labor [56 h]; Equipment Opreator [112.06 h]; Excavator-Poclain [56 h]; Dump Truck [56 h]; Duct bank for MV cables UPVC (4xø150mm) [2.36 m]; Duct bank for MV cables UPVC (6xø150mm) [2.79 m] |
| RHD4CZ9C071MV2300 | Pouring of Duct Banks for Medium Voltage Network - (RD-C-7/1)-Z9-C071-MV | 2026-10-22 → 2027-05-24 (+214d) | 2026-10-26 → 2027-05-27 (+213d) |  |  |
| RHD4CZ9C071MV2400 | Backfilling of Duct Banks for Medium Voltage Network - (RD-C-7/1)-Z9-C071-MV | 2026-10-27 → 2027-05-29 (+214d) | 2026-10-29 → 2027-05-31 (+214d) |  | resources Unskilled Labor [27.99 h]; Equipment Opreator [55.98 h]; Excavator-Poclain [27.99 h]; Dump Truck [27.99 h]; Duct bank for MV cables UPVC (4xø150mm) [3.53 m]; Duct bank for MV cables UPVC (6xø150mm) [4.18 m] → Unskilled Labor [28 h]; Equipment Opreator [56 h]; Excavator-Poclain [28 h]; Dump Truck [28 h]; Duct bank for MV cables UPVC (4xø150mm) [3.53 m]; Duct bank for MV cables UPVC (6xø150mm) [4.18 m] |
| 8791 | **RHD4-02-002-C071-(MV)-Medium Voltage cables 3Cx 500 mm²** | 2026-10-11 → 2027-05-08 (+209d) | 2026-11-05 → 2027-06-07 (+214d) |  |  |
| RHD4CZ9C071MV3100 | Installation of Medium Voltage Cables 3Cx 500 mm² - (RD-C-7/1)-Z9-C071-MV | 2026-10-11 → 2027-05-08 (+209d) | 2026-10-27 → 2027-05-29 (+214d) |  |  |
| RHD4CZ9C071MV3200 | Joints Installation of Medium Voltage Cables 3Cx 500 mm² - (RD-C-7/1)-Z9-C071-MV | 2026-10-28 → 2027-05-30 (+214d) | 2026-10-31 → 2027-06-01 (+213d) |  | resources Skilled labor [27.23 h]; Unskilled Labor [108.9 h]; Electrician [54.45 h]; Equipment Opreator [27.23 h]; Boom Truck [27.23 h]; Straight joints cables for 13.8 kv 3Cx 500 mm², Al /XLPE/LLDPE [5 Unit] → Skilled labor [27.2 h]; Unskilled Labor [108.9 h]; Electrician [54.45 h]; Equipment Opreator [27.2 h]; Boom Truck [27.2 h]; Straight joints cables for 13.8 kv 3Cx 500 mm², Al /XLPE/LLDPE [5 Unit] |
| RHD4CZ9C071MV3300 | Testing of Medium Voltage Cables 3Cx 500 mm² - (RD-C-7/1)-Z9-C071-MV | 2026-11-01 → 2027-06-02 (+213d) | 2026-11-05 → 2027-06-07 (+214d) |  |  |
| 8795 | **RHD4-02-002-Z9-C071-Low Voltage Network - LV** | 2027-02-17 → 2027-06-07 (+110d) | 2027-03-28 → 2027-07-19 (+113d) |  |  |
| 8796 | **RHD4-02-002-C071-(LV)-Low Voltage duct banks** | 2027-02-17 → 2027-06-07 (+110d) | 2027-02-27 → 2027-06-15 (+108d) |  |  |
| RHD4CZ9C071LV2100 | Excavation of Duct Banks for Low Voltage Network - (RD-C-7/1)-Z9-C071-LV | 2027-02-17 → 2027-06-07 (+110d) | 2027-02-18 → 2027-06-08 (+110d) |  |  |
| RHD4CZ9C071LV2200 | Installation of Duct Banks for Low Voltage Network - (RD-C-7/1)-Z9-C071-LV | 2027-02-20 → 2027-06-09 (+109d) | 2027-02-21 → 2027-06-10 (+109d) |  |  |
| RHD4CZ9C071LV2300 | Pouring of Duct Banks for Low Voltage Network - (RD-C-7/1)-Z9-C071-LV | 2027-02-23 → 2027-06-12 (+109d) | 2027-02-24 → 2027-06-13 (+109d) |  |  |
| RHD4CZ9C071LV2400 | Backfilling of Duct Banks for Low Voltage Network - (RD-C-7/1)-Z9-C071-LV | 2027-02-25 → 2027-06-14 (+109d) | 2027-02-27 → 2027-06-15 (+108d) |  |  |
| 8797 | **RHD4-02-002-C071-(LV)-Low Voltage Drawpit** | 2027-02-28 → 2027-06-19 (+111d) | 2027-03-03 → 2027-06-22 (+111d) |  |  |
| RHD4CZ9C071LV5100 | Excavation of Drawpit size 900x900x1000mm for Low Voltage Network - (RD-C-7/1)-Z9-C071-LV | 2027-02-28 → 2027-06-19 (+111d) | 2027-03-01 → 2027-06-20 (+111d) |  |  |
| RHD4CZ9C071LV5200 | Installation of Drawpit size 900x900x1000mm for Low Voltage Network - (RD-C-7/1)-Z9-C071-LV | 2027-03-02 → 2027-06-21 (+111d) | 2027-03-03 → 2027-06-22 (+111d) |  |  |
| 8798 | **RHD4-02-002-C071-(LV)-Low Voltage cables** | 2027-03-04 → 2027-06-23 (+111d) | 2027-03-28 → 2027-07-19 (+113d) |  |  |
| RHD4CZ9C071LV3100 | Excavation for Low Voltage Cables for Low Voltage Network - (RD-C-7/1)-Z9-C071-LV | 2027-03-04 → 2027-06-23 (+111d) | 2027-03-06 → 2027-06-30 (+116d) | 2d → 7d | resources Skilled labor [66.87 h]; Unskilled Labor [133.62 h]; Equipment Opreator [133.62 h]; Excavator-Poclain [66.87 h]; Boom Truck [66.87 h]; Cable, Copper 4x70mm2/ CU/XLPE/PVC [63.12 m]; Cable, Copper 4x50mm2/ CU/XLPE/PVC +1x25mm2 CU/PVC [32.08 m]; Cable, Copper 3x10mm2/ CU/XLPE/SWA/PVC [211.6 m] → Skilled labor [66.87 h]; Unskilled Labor [133.6 h]; Equipment Opreator [133.6 h]; Excavator-Poclain [66.87 h]; Boom Truck [66.87 h]; Cable, Copper 4x70mm2/ CU/XLPE/PVC [63.12 m]; Cable, Copper 4x50mm2/ CU/XLPE/PVC +1x25mm2 CU/PVC [32.08 m]; Cable, Copper 3x10mm2/ CU/XLPE/SWA/PVC [211.6 m] |
| RHD4CZ9C071LV3200 | Cable Laying of Low Voltage Cables for Low Voltage Network - (RD-C-7/1)-Z9-C071-LV | 2027-03-07 → 2027-07-01 (+116d) | 2027-03-16 → 2027-07-07 (+113d) |  |  |
| RHD4CZ9C071LV3300 | Warning tape and Backfill for Low Voltage Cables for Low Voltage Network - (RD-C-7/1)-Z9-C071-LV | 2027-03-17 → 2027-07-08 (+113d) | 2027-03-23 → 2027-07-14 (+113d) |  |  |
| RHD4CZ9C071LV3400 | Testing of Low Voltage Cables for Low Voltage Network - (RD-C-7/1)-Z9-C071-LV | 2027-03-24 → 2027-07-15 (+113d) | 2027-03-28 → 2027-07-19 (+113d) |  | resources Skilled labor [33.43 h]; Unskilled Labor [133.62 h]; Electrician [66.87 h]; Equipment Opreator [33.43 h]; Boom Truck [33.43 h]; Cable, Copper 4x70mm2/ CU/XLPE/PVC [15.78 m]; Cable, Copper 4x50mm2/ CU/XLPE/PVC +1x25mm2 CU/PVC [8.02 m]; Cable, Copper 3x10mm2/ CU/XLPE/SWA/PVC [52.9 m] → Skilled labor [33.43 h]; Unskilled Labor [133.6 h]; Electrician [66.87 h]; Equipment Opreator [33.43 h]; Boom Truck [33.43 h]; Cable, Copper 4x70mm2/ CU/XLPE/PVC [15.78 m]; Cable, Copper 4x50mm2/ CU/XLPE/PVC +1x25mm2 CU/PVC [8.02 m]; Cable, Copper 3x10mm2/ CU/XLPE/SWA/PVC [52.9 m] |
| 8801 | **RHD4-02-002-Z9-C071-Street Lighting Network - SL** | 2027-04-27 → 2027-10-14 (+170d) | 2027-07-10 → 2027-12-27 (+170d) |  |  |
| 8802 | **RHD4-02-002-C071-(SL)-Street Lighting duct banks** | 2027-04-27 → 2027-10-14 (+170d) | 2027-05-20 → 2027-11-07 (+171d) |  |  |
| RHD4CZ9C071SL2100 | Excavation of Duct Banks for Street Lighting Network - (RD-C-7/1)-Z9-C071-SL | 2027-04-27 → 2027-10-14 (+170d) | 2027-05-02 → 2027-10-19 (+170d) |  | resources Skilled labor [47.59 h]; Unskilled Labor [47.59 h]; Equipment Opreator [95.18 h]; Excavator-Poclain [47.59 h]; Dump Truck [47.59 h]; Road Crossing Duct for Street Lighting cables UPVC (2x?110mm) [4.01 m]; Road Crossing Duct for Street Lighting cables UPVC (4x?110mm) [2.54 m] → Skilled labor [47.59 h]; Unskilled Labor [47.59 h]; Equipment Opreator [95.2 h]; Excavator-Poclain [47.59 h]; Dump Truck [47.59 h]; Road Crossing Duct for Street Lighting cables UPVC (2x?110mm) [4.01 m]; Road Crossing Duct for Street Lighting cables UPVC (4x?110mm) [2.54 m] |
| RHD4CZ9C071SL2200 | Installation of Duct Banks for Street Lighting Network - (RD-C-7/1)-Z9-C071-SL | 2027-05-03 → 2027-10-20 (+170d) | 2027-05-05 → 2027-10-27 (+175d) | 3d → 7d | resources Carpenter [7.19 h]; Skilled labor [71.33 h]; Unskilled Labor [71.33 h]; Steel Fixer [7.19 h]; Road Crossing Duct for Street Lighting cables UPVC (2x?110mm) [4.01 m]; Road Crossing Duct for Street Lighting cables UPVC (4x?110mm) [2.54 m] → Carpenter [7.2 h]; Skilled labor [71.33 h]; Unskilled Labor [71.33 h]; Steel Fixer [7.2 h]; Road Crossing Duct for Street Lighting cables UPVC (2x?110mm) [4.01 m]; Road Crossing Duct for Street Lighting cables UPVC (4x?110mm) [2.54 m] |
| RHD4CZ9C071SL2300 | Pouring of Duct Banks for Street Lighting Network - (RD-C-7/1)-Z9-C071-SL | 2027-05-06 → 2027-10-28 (+175d) | 2027-05-11 → 2027-11-02 (+175d) |  |  |
| RHD4CZ9C071SL2400 | Backfilling of Duct Banks for Street Lighting Network - (RD-C-7/1)-Z9-C071-SL | 2027-05-12 → 2027-11-03 (+175d) | 2027-05-20 → 2027-11-07 (+171d) |  |  |
| 8803 | **RHD4-02-002-C071-(SL)-Street Lighting Drawpit** | 2027-05-12 → 2027-11-03 (+175d) | 2027-05-20 → 2027-11-07 (+171d) |  |  |
| RHD4CZ9C071SL5100 | Excavation of Drawpit size 600x600x900mm for Street Lighting Network - (RD-C-7/1)-Z9-C071-SL | 2027-05-12 → 2027-11-03 (+175d) | 2027-05-13 → 2027-11-04 (+175d) |  |  |
| RHD4CZ9C071SL5200 | Installation of Drawpit size 600x600x900mm for Street Lighting Network - (RD-C-7/1)-Z9-C071-SL | 2027-05-19 → 2027-11-06 (+171d) | 2027-05-20 → 2027-11-07 (+171d) |  |  |
| 8804 | **RHD4-02-002-C071-(SL)-Street Lighting cables** | 2027-05-22 → 2027-11-08 (+170d) | 2027-06-16 → 2027-12-04 (+171d) |  |  |
| RHD4CZ9C071SL3100 | Excavation for Street Lighting Cables for Street Lighting Network - (RD-C-7/1)-Z9-C071-SL | 2027-05-22 → 2027-11-08 (+170d) | 2027-05-29 → 2027-11-15 (+170d) |  |  |
| RHD4CZ9C071SL3200 | Cable Laying of Street Lighting Cables for Street Lighting Network - (RD-C-7/1)-Z9-C071-SL | 2027-05-30 → 2027-11-16 (+170d) | 2027-06-05 → 2027-11-22 (+170d) |  |  |
| RHD4CZ9C071SL3300 | Warning tape and Backfill for Street Lighting Cables for Street Lighting Network - (RD-C-7/1)-Z9-C071-SL | 2027-06-06 → 2027-11-23 (+170d) | 2027-06-12 → 2027-11-29 (+170d) |  |  |
| RHD4CZ9C071SL3400 | Testing of Street Lighting Cables for Street Lighting Network - (RD-C-7/1)-Z9-C071-SL | 2027-06-13 → 2027-11-30 (+170d) | 2027-06-16 → 2027-12-04 (+171d) |  |  |
| 8805 | **RHD4-02-002-C071-(SL)-Street Lighting Poles** | 2027-06-17 → 2027-12-05 (+171d) | 2027-07-07 → 2027-12-25 (+171d) |  |  |
| RHD4CZ9C071SL1100 | Excavation for RC Base for Lighting Poles for Street Lighting Network - (RD-C-7/1)-Z9-C071-SL | 2027-06-17 → 2027-12-05 (+171d) | 2027-06-20 → 2027-12-07 (+170d) |  |  |
| RHD4CZ9C071SL1200 | Installation for RC Base for Lighting Poles for Street Lighting Network - (RD-C-7/1)-Z9-C071-SL | 2027-06-21 → 2027-12-08 (+170d) | 2027-06-23 → 2027-12-11 (+171d) |  |  |
| RHD4CZ9C071SL1300 | Backfill for RC Base for Lighting Poles for Street Lighting Network - (RD-C-7/1)-Z9-C071-SL | 2027-06-24 → 2027-12-12 (+171d) | 2027-06-27 → 2027-12-14 (+170d) |  |  |
| RHD4CZ9C071SL1400 | Installation for Lighting Poles for Street Lighting Network - (RD-C-7/1)-Z9-C071-SL | 2027-06-28 → 2027-12-15 (+170d) | 2027-07-01 → 2027-12-19 (+171d) |  |  |
| RHD4CZ9C071SL1500 | Luminaire Installation for Lighting Poles for Street Lighting Network - (RD-C-7/1)-Z9-C071-SL | 2027-07-03 → 2027-12-20 (+170d) | 2027-07-07 → 2027-12-25 (+171d) |  |  |
| 8807 | **RHD4-02-002-C071-(SL)-Street Lighting Earthing System** | 2027-07-08 → 2027-12-26 (+171d) | 2027-07-10 → 2027-12-27 (+170d) |  |  |
| RHD4CZ9C071SL6100 | Installation of Earthing for Lighting Poles and Fedder Pillers for Street Lighting Network - (RD-C-7/1)-Z9-C071-SL | 2027-07-08 → 2027-12-26 (+171d) | 2027-07-10 → 2027-12-27 (+170d) |  |  |
| 8813 | **RHD4-02-002-Z9-C071-Telecommunications Network - TC** | 2026-08-17 → 2027-02-20 (+187d) | 2027-09-29 → 2028-04-26 (+210d) |  |  |
| 8814 | **RHD4-02-002-C071-(TC)-Telecommunications Ducts** | 2027-07-11 → 2027-12-28 (+170d) | 2027-09-05 → 2028-03-09 (+186d) |  |  |
| RHD4CZ9C071TC2100 | Excavation of HDPE Ducts for Telecom Network - (RD-C-7/1)-Z9-C071-TC | 2027-07-11 → 2027-12-28 (+170d) | 2027-07-26 → 2028-01-12 (+170d) |  |  |
| RHD4CZ9C071TC2200 | Installation of HDPE Ducts for Telecom Network - (RD-C-7/1)-Z9-C071-TC | 2027-07-27 → 2028-01-25 (+182d) | 2027-08-19 → 2028-02-17 (+182d) |  |  |
| RHD4CZ9C071TC2400 | Backfilling of HDPE Ducts for Telecom Network - (RD-C-7/1)-Z9-C071-TC | 2027-08-21 → 2028-02-19 (+182d) | 2027-09-05 → 2028-03-09 (+186d) |  |  |
| 8815 | **RHD4-02-002-C071-(TC)-Telecommunications Manholes** | 2027-09-08 → 2028-04-04 (+209d) | 2027-09-29 → 2028-04-26 (+210d) |  |  |
| RHD4CZ9C071TC5100 | Excavation for Manholes for Telecom Network - (RD-C-7/1)-Z9-C071-TC | 2027-09-08 → 2028-04-04 (+209d) | 2027-09-18 → 2028-04-15 (+210d) | 9d → 10d |  |

| ID | Task | Start | Finish | Duration | Complete | Other |
| --- | --- | --- | --- | --- | --- | --- |
| RHD4CZ9C071TC5200 | Installation of Manholes for Telecom Network - (RD-C-7/1)-Z9-C071-TC | 2027-09-19 → 2028-04-16 (+210d) | 2027-09-29 → 2028-04-26 (+210d) | 9d → 10d |  |  |
| 8816 | **RHD4-02-002-C071-(TC)-Telecomminications Road Crossings** | 2026-08-17 → 2027-02-20 (+187d) | 2026-08-30 → 2027-03-25 (+207d) |  |  |  |
| RHD4CZ9C071TC3100 | Excavation for Road Crossings for Telecom Network - (RD-C-7/1)-Z9-C071-TC | 2026-08-17 → 2027-02-20 (+187d) | 2026-08-19 → 2027-02-25 (+190d) | 3d → 5d |  |  |
| RHD4CZ9C071TC3200 | Installation of Road Crossings for Telecom Network - (RD-C-7/1)-Z9-C071-TC | 2026-08-20 → 2027-02-27 (+191d) | 2026-08-23 → 2027-03-06 (+195d) | 3d → 7d |  |  |
| RHD4CZ9C071TC3300 | Pouring of Road Crossings for Telecom Network - (RD-C-7/1)-Z9-C071-TC | 2026-08-24 → 2027-03-07 (+195d) | 2026-08-26 → 2027-03-17 (+203d) | 3d → 7d |  |  |
| RHD4CZ9C071TC3400 | Backfilling of Road Crossings for Telecom Network - (RD-C-7/1)-Z9-C071-TC | 2026-08-27 → 2027-03-18 (+203d) | 2026-08-30 → 2027-03-25 (+207d) | 3d → 7d |  |  |
| 8817 | **RHD4-02-002-Z9-C071-Information and Communication Technologies - ICT** | 2026-08-17 → 2027-02-20 (+187d) | 2027-11-21 → 2028-07-17 (+239d) |  |  |  |
| 8818 | **RHD4-02-002-C071-(ICT)-Information and Communication Technologies Ducts** | 2027-09-30 → 2028-04-27 (+210d) | 2027-10-31 → 2028-06-26 (+239d) |  |  |  |
| RHD4CZ9C071ICT2100 | Excavation of HDPE Ducts for ICT Network - (RD-C-7/1)-Z9-C071-ICT | 2027-09-30 → 2028-04-27 (+210d) | 2027-10-10 → 2028-05-16 (+219d) | 9d → 14d |  |  |
| RHD4CZ9C071ICT2200 | Installation of HDPE Ducts for ICT Network - (RD-C-7/1)-Z9-C071-ICT | 2027-10-11 → 2028-05-17 (+219d) | 2027-10-20 → 2028-06-10 (+234d) | 9d → 21d |  |  |
| RHD4CZ9C071ICT2400 | Backfilling of HDPE Ducts for ICT Network - (RD-C-7/1)-Z9-C071-ICT | 2027-10-21 → 2028-06-11 (+234d) | 2027-10-31 → 2028-06-26 (+239d) | 9d → 14d |  |  |
| 8819 | **RHD4-02-002-C071-(ICT)-Information and Communication Technologies Manholes** | 2027-11-01 → 2028-06-27 (+239d) | 2027-11-21 → 2028-07-17 (+239d) |  |  |  |
| RHD4CZ9C071ICT5100 | Excavation for Manholes for ICT Network - (RD-C-7/1)-Z9-C071-ICT | 2027-11-01 → 2028-06-27 (+239d) | 2027-11-10 → 2028-07-06 (+239d) |  |  |  |
| RHD4CZ9C071ICT5200 | Installation of Manholes for ICT Network - (RD-C-7/1)-Z9-C071-ICT | 2027-11-11 → 2028-07-08 (+240d) | 2027-11-21 → 2028-07-17 (+239d) |  |  |  |
| 8820 | **RHD4-02-002-C071-(ICT)-Information and Communication Technologies Road Crossings** | 2026-08-17 → 2027-02-20 (+187d) | 2026-09-06 → 2027-03-16 (+191d) |  |  |  |
| RHD4CZ9C071ICT3100 | Excavation for Road Crossings for ICT Network - (RD-C-7/1)-Z9-C071-ICT | 2026-08-17 → 2027-02-20 (+187d) | 2026-08-20 → 2027-02-24 (+188d) |  |  |  |
| RHD4CZ9C071ICT3200 | Installation of Road Crossings for ICT Network - (RD-C-7/1)-Z9-C071-ICT | 2026-08-22 → 2027-02-25 (+187d) | 2026-08-26 → 2027-03-02 (+188d) |  |  |  |
| RHD4CZ9C071ICT3300 | Pouring of Road Crossings for ICT Network - (RD-C-7/1)-Z9-C071-ICT | 2026-08-27 → 2027-03-03 (+188d) | 2026-09-01 → 2027-03-08 (+188d) |  |  |  |
| RHD4CZ9C071ICT3400 | Backfilling of Road Crossings for ICT Network - (RD-C-7/1)-Z9-C071-ICT | 2026-09-02 → 2027-03-13 (+192d) | 2026-09-06 → 2027-03-16 (+191d) |  |  |  |
| 8821 | **RHD4-02-002-Z9-C071-Security Network - CCTV** | 2027-11-23 → 2028-07-08 (+228d) | 2027-12-23 → 2028-08-07 (+228d) |  |  |  |
| 8822 | **RHD4-02-002-C071-(CCTV)-Civil Works** | 2027-11-23 → 2028-07-08 (+228d) | 2027-11-28 → 2028-07-12 (+227d) |  |  |  |
| RHD4CZ9C071CCTV2100 | Civil Works for Security Network - (RD-C-7/1)-Z9-C071-CCTV | 2027-11-23 → 2028-07-08 (+228d) | 2027-11-28 → 2028-07-12 (+227d) |  |  |  |
| 8823 | **RHD4-02-002-C071-(CCTV)-CCTV Poles** | 2027-11-29 → 2028-07-13 (+227d) | 2027-12-09 → 2028-07-24 (+228d) |  |  |  |
| RHD4CZ9C071CCTV1100 | Excavation for RC Base for CCTV Poles for Security Network - (RD-C-7/1)-Z9-C071-CCTV | 2027-11-29 → 2028-07-13 (+227d) | 2027-11-30 → 2028-07-15 (+228d) |  |  |  |
| RHD4CZ9C071CCTV1200 | Installation for RC Base for CCTV Poles for Security Network - (RD-C-7/1)-Z9-C071-CCTV | 2027-12-01 → 2028-07-16 (+228d) | 2027-12-02 → 2028-07-17 (+228d) |  |  |  |
| RHD4CZ9C071CCTV1300 | Backfill for RC Base for CCTV Poles for Security Network - (RD-C-7/1)-Z9-C071-CCTV | 2027-12-04 → 2028-07-18 (+227d) | 2027-12-05 → 2028-07-19 (+227d) |  |  |  |
| RHD4CZ9C071CCTV1400 | Installation for CCTV Poles for Security Network - (RD-C-7/1)-Z9-C071-CCTV | 2027-12-06 → 2028-07-20 (+227d) | 2027-12-07 → 2028-07-22 (+228d) |  |  |  |
| RHD4CZ9C071CCTV1500 | Protection post Installation for CCTV Poles for Security Network - (RD-C-7/1)-Z9-C071-CCTV | 2027-12-08 → 2028-07-23 (+228d) | 2027-12-09 → 2028-07-24 (+228d) |  |  |  |
| 8824 | **RHD4-02-002-C071-(CCTV)-Camera** | 2027-12-11 → 2028-07-25 (+227d) | 2027-12-12 → 2028-07-26 (+227d) |  |  |  |
| RHD4CZ9C071CCTV3100 | Installation for Cameras for Security Network - (RD-C-7/1)-Z9-C071-CCTV | 2027-12-11 → 2028-07-25 (+227d) | 2027-12-12 → 2028-07-26 (+227d) |  |  |  |
| 8825 | **RHD4-02-002-C071-(CCTV)-Power and Infrastructure** | 2027-12-13 → 2028-07-27 (+227d) | 2027-12-14 → 2028-07-29 (+228d) |  |  |  |
| RHD4CZ9C071CCTV4100 | Installation of Power outlet, UPS and midspan for PTZ Camerafor Cameras for Security Network - (RD-C-7/1)-Z9-C071-CCTV | 2027-12-13 → 2028-07-27 (+227d) | 2027-12-14 → 2028-07-29 (+228d) |  |  |  |
| 8827 | **RHD4-02-002-C071-(CCTV)-CCTV Panels and Components** | 2027-12-15 → 2028-07-30 (+228d) | 2027-12-23 → 2028-08-07 (+228d) |  |  |  |
| RHD4CZ9C071CCTV6100 | Installation for CCTV Panels for Security Network - (RD-C-7/1)-Z9-C071-CCTV | 2027-12-15 → 2028-07-30 (+228d) | 2027-12-23 → 2028-08-07 (+228d) |  |  |  |
| 8838 | **RHD4-02-002-Z9-L05** |  | 2027-04-17 → 2027-09-25 (+161d) |  |  |  |
| 9017 | **RHD4-02-002-Z9-L05-Road Works - RD** | 2026-09-12 → 2027-02-08 (+149d) | 2027-04-17 → 2027-09-25 (+161d) |  |  |  |
| 9018 | **RHD4-02-002-L05-(RD)-Subgrade** | 2026-09-12 → 2027-02-08 (+149d) | 2026-09-13 → 2027-02-09 (+149d) |  |  |  |
| RHD4CZ9L05RD1100 | Supply, lay and compaction subgrade compacted thickness 300 mm for Roads - (RD-L-5)-Z9-L05-RD | 2026-09-12 → 2027-02-08 (+149d) | 2026-09-13 → 2027-02-09 (+149d) |  |  | resources Skilled labor [19.6 h]; Unskilled Labor [39.21 h]; Electrician [19.6 h]; Equipment Opreator [134.06 h]; Water Truck [6.43 h]; Roller compactor [9.8 h]; Grader [19.6 h]; Dump Truck [98.12 h]; Subgrade [943.75 m3] → Skilled labor [19.6 h]; Unskilled Labor [39.2 h]; Electrician [19.6 h]; Equipment Opreator [134.06 h]; Water Truck [6.4 h]; Roller compactor [9.8 h]; Grader [19.6 h]; Dump Truck [98.12 h]; Subgrade [943.75 m3] |
| 9019 | **RHD4-02-002-L05-(RD)-Aggregate Base Course** | 2026-09-14 → 2027-02-10 (+149d) | 2026-09-15 → 2027-02-11 (+149d) |  |  |  |
| RHD4CZ9L05RD2100 | Supply, lay and compaction Aggregate base course compacted thickness 300 mmfor Roads - (RD-L-5)-Z9-L05-RD | 2026-09-14 → 2027-02-10 (+149d) | 2026-09-15 → 2027-02-11 (+149d) |  |  | resources Skilled labor [7.3 h]; Unskilled Labor [14.48 h]; Equipment Opreator [92.02 h]; Water Truck [4.79 h]; Roller compactor [14.48 h]; Grader [14.48 h]; Dump Truck [58.15 h]; Aggregate Base Courses [592.77 m3] → Skilled labor [7.3 h]; Unskilled Labor [14.48 h]; Equipment Opreator [92 h]; Water Truck [4.8 h]; Roller compactor [14.48 h]; Grader [14.48 h]; Dump Truck [58.15 h]; Aggregate Base Courses [592.77 m3] |
| 9020 | **RHD4-02-002-L05-(RD)-Bituminous base course Two Layers, including (MC1)&(RC2)** | 2026-09-16 → 2027-02-13 (+150d) | 2027-03-29 → 2027-08-29 (+153d) |  |  |  |
| RHD4CZ9L05RD3100 | Supply, lay and Asphaltic base course including Prime Coat (MC1) for 1st Layer - (RD-L-5)-Z9-L05-RD | 2026-09-16 → 2027-02-13 (+150d) | 2026-09-17 → 2027-02-14 (+150d) |  |  |  |
| RHD4CZ9L05RD3200 | Supply, lay and Asphaltic base course including Tack Coat (RC2) for 2nd Layer - (RD-L-5)-Z9-L05-RD | 2027-03-28 → 2027-08-28 (+153d) | 2027-03-29 → 2027-08-29 (+153d) |  |  |  |
| 9022 | **RHD4-02-002-L05-(RD)-Precast Concrete Curb** | 2027-03-30 → 2027-08-30 (+153d) | 2027-03-31 → 2027-09-04 (+157d) |  |  |  |
| RHD4CZ9L05RD5100 | Supply and installation Precast Concrete Kerb for Roads - (RD-L-5)-Z9-L05-RD | 2027-03-30 → 2027-08-30 (+153d) | 2027-03-31 → 2027-09-04 (+157d) | 2d → 5d |  |  |
| 9025 | **RHD4-02-002-L05-(RD)-Traffic Signage** | 2027-04-01 → 2027-09-05 (+157d) | 2027-04-04 → 2027-09-11 (+160d) |  |  |  |
| RHD4CZ9L05RD8100 | Installation of Traffic Signage for Road Network - (RD-L-5)-Z9-L05-RD | 2027-04-01 → 2027-09-05 (+157d) | 2027-04-04 → 2027-09-11 (+160d) | 3d → 6d |  |  |
| 9023 | **RHD4-02-002-L05-(RD)-Precast Interlocking Block Pavers** | 2027-04-05 → 2027-09-12 (+160d) | 2027-04-06 → 2027-09-13 (+160d) |  |  |  |
| RHD4CZ9L05RD6100 | Interlocking block pavers for sidewalk-footpath for Side walks and Parking areas - (RD-L-5)-Z9-L05-RD | 2027-04-05 → 2027-09-12 (+160d) | 2027-04-06 → 2027-09-13 (+160d) |  |  |  |
| 9021 | **RHD4-02-002-L05-(RD)-Bituminous concrete wearing course including tack coat (RC2)** | 2027-04-07 → 2027-09-14 (+160d) | 2027-04-08 → 2027-09-15 (+160d) |  |  |  |
| RHD4CZ9L05RD4100 | Supply, lay and compaction Asphaltic wearing course including tack Coat (RC2)for Road Network - (RD-L-5)-Z9-L05-RD | 2027-04-07 → 2027-09-14 (+160d) | 2027-04-08 → 2027-09-15 (+160d) |  |  |  |
| 9024 | **RHD4-02-002-L05-(RD)-Pavement Marking** | 2027-04-10 → 2027-09-16 (+159d) | 2027-04-17 → 2027-09-25 (+161d) |  |  |  |
| RHD4CZ9L05RD7100 | Pavement Markings for Road Network - (RD-L-5)-Z9-L05-RD | 2027-04-10 → 2027-09-16 (+159d) | 2027-04-17 → 2027-09-25 (+161d) |  |  | resources Skilled labor [74.38 h]; Unskilled Labor [148.87 h]; Equipment Opreator [74.38 h]; Road Marking Machine [74.38 h]; Retroreflective Thermoplastic White Traffic Markings [192.08 m2]; Retroreflective Thermoplastic Yellow, Traffic Markings [169.36 m2]; Rumble strip [85 m]; Retroreflective raised pavement markers (cat eyes) [1285 nr] → Skilled labor [74.4 h]; Unskilled Labor [148.87 h]; Equipment Opreator [74.4 h]; Road Marking Machine [74.4 h]; Retroreflective Thermoplastic White Traffic Markings [192.08 m2]; Retroreflective Thermoplastic Yellow, Traffic Markings [169.36 m2]; Rumble strip [85 m]; Retroreflective raised pavement markers (cat eyes) [1285 nr] |
| 8842 | **RHD4-02-002-Z9-L05-Storm Network - ST** | 2026-11-25 → 2026-09-19 (-67d) | 2027-01-17 → 2027-06-23 (+157d) |  |  |  |
| 8859 | **RHD4-02-002-L05-(ST)-MH Works - 1200 mm diameter** | 2026-12-02 → 2026-09-19 (-74d) | 2027-01-17 → 2027-06-23 (+157d) |  |  |  |
| RHD4CZ9L05ST3100 | Excavation and PC Blinding works for MH 1200 mm - (RD-L-5)-Z9-L05-ST | 2026-12-02 → 2026-09-19 A (-74d) | 2026-12-03 → 2026-09-20 A (-74d) |  | 0% → 100% | resources Skilled labor [7.3 h]; Unskilled Labor [7.3 h]; Equipment Opreator [11.65 h]; Excavator-Poclain [7.3 h]; Water Truck [0.76 h]; Dump Truck [3.59 h]; MH (1200mm Diameter) - ST - depth 1.50 - 2.5m [0.5 nr] → Skilled labor [7.3 h]; Unskilled Labor [7.3 h]; Equipment Opreator [11.65 h]; Excavator-Poclain [7.3 h]; Water Truck [0.8 h]; Dump Truck [3.59 h]; MH (1200mm Diameter) - ST - depth 1.50 - 2.5m [0.5 nr] |
| RHD4CZ9L05ST3200 | Installation of Base for MH 1200 mm - (RD-L-5)-Z9-L05-ST | 2026-12-05 → 2026-09-22 A (-74d) | 2026-12-06 → 2026-09-24 A (-73d) |  | 0% → 100% |  |
| RHD4CZ9L05ST3300 | MH Ring and C.Slab works and Backfilling works for MH 1200 mm - (RD-L-5)-Z9-L05-ST | 2026-12-07 → 2027-05-02 (+146d) | 2026-12-08 → 2027-05-03 (+146d) |  |  |  |
| RHD4CZ9L05ST3400 | Steel Cover for MH 1200 mm - (RD-L-5)-Z9-L05-ST | 2027-01-13 → 2027-06-20 (+158d) | 2027-01-14 → 2027-06-21 (+158d) |  |  |  |
| RHD4CZ9L05ST3500 | Finishing, Benching, Testing works for MH 1200 mm - (RD-L-5)-Z9-L05-ST | 2027-01-16 → 2027-06-22 (+157d) | 2027-01-17 → 2027-06-23 (+157d) |  |  |  |
| 8845 | **RHD4-02-002-L05-(ST)-GRP Pipes - 600 mm diameter** | 2026-11-25 → 2026-09-19 (-67d) | 2026-12-06 → 2027-05-10 (+155d) |  |  |  |
| RHD4CZ9L05ST1102 | Excavation works for GRP Pipe Line 600 mm - (RD-L-5)-Z9-L05-ST | 2026-11-25 → 2026-09-19 A (-67d) | 2026-11-26 → 2027-05-01 (+156d) |  | 0% → 50% |  |
| RHD4CZ9L05ST1202 | Bedding works for GRP Pipe Line 600 mm - (RD-L-5)-Z9-L05-ST | 2026-11-28 → 2026-09-22 A (-67d) | 2026-11-29 → 2027-05-03 (+155d) |  | 0% → 50% |  |
| RHD4CZ9L05ST1302 | Installing for GRP Pipe Line 600 mm - (RD-L-5)-Z9-L05-ST | 2026-11-30 → 2026-09-24 A (-67d) | 2026-12-01 → 2027-05-05 (+155d) |  | 0% → 50% |  |
| RHD4CZ9L05ST1502 | Backfilling and warning tape works for GRP Pipe Line 600 mm - (RD-L-5)-Z9-L05-ST | 2026-12-05 → 2026-09-27 A (-69d) | 2026-12-06 → 2027-05-10 (+155d) |  | 0% → 50% |  |
| RHD4CZ9L05ST1402 | Primary Test for GRP Pipe Line 600 mm - (RD-L-5)-Z9-L05-ST | 2026-12-02 → 2027-05-06 (+155d) | 2026-12-03 → 2027-05-08 (+156d) |  |  |  |
| 8844 | **RHD4-02-002-L05-(ST)-GRP Pipes - 500 mm diameter** | 2026-11-28 → 2026-09-19 (-70d) | 2026-12-08 → 2027-05-08 (+151d) |  |  |  |
| RHD4CZ9L05ST1101 | Excavation works for GRP Pipe Line 500 mm - (RD-L-5)-Z9-L05-ST | 2026-11-28 → 2026-09-19 A (-70d) | 2026-11-29 → 2026-09-20 A (-70d) |  | 0% → 100% |  |
| RHD4CZ9L05ST1201 | Bedding works for GRP Pipe Line 500 mm - (RD-L-5)-Z9-L05-ST | 2026-11-30 → 2026-09-22 A (-69d) | 2026-12-01 → 2026-09-24 A (-68d) |  | 0% → 100% |  |
| RHD4CZ9L05ST1301 | Installing for GRP Pipe Line 500 mm - (RD-L-5)-Z9-L05-ST | 2026-12-02 → 2026-09-24 A (-69d) | 2026-12-03 → 2026-09-26 A (-68d) |  | 0% → 100% |  |

| ID | Task | Start | Finish | Complete | Other |
| --- | --- | --- | --- | --- | --- |
| RHD4CZ9L05ST1501 | Backfilling and warning tape works for GRP Pipe Line 500 mm - (RD-L-5)-Z9-L05-ST | 2026-12-07 → 2026-09-27 A (-71d) | 2026-12-08 → 2026-09-28 A (-71d) | 0% → 100% | resources Skilled labor [1.63 h]; Unskilled Labor [3.16 h]; Equipment Opreator [3.16 h]; Excavator-Poclain [1.63 h]; Dump Truck [1.63 h]; GRP (500mm Diameter) - ST - Depth less than 1.5 m [5.8 m] → Skilled labor [1.6 h]; Unskilled Labor [3.16 h]; Equipment Opreator [3.16 h]; Excavator-Poclain [1.6 h]; Dump Truck [1.6 h]; GRP (500mm Diameter) - ST - Depth less than 1.5 m [5.8 m] |
| RHD4CZ9L05ST1401 | Primary Test for GRP Pipe Line 500 mm - (RD-L-5)-Z9-L05-ST | 2026-12-05 → 2027-05-06 (+152d) | 2026-12-06 → 2027-05-08 (+153d) |  |  |
| 8857 | **RHD4-02-002-L05-(ST)-UPVC Pipes - 300 mm diameter** | 2026-11-30 → 2026-09-19 (-72d) | 2026-12-10 → 2027-05-12 (+153d) |  |  |
| RHD4CZ9L05ST2100 | Excavation works for UPVC Pipe Line 300 mm - (RD-L-5)-Z9-L05-ST | 2026-11-30 → 2026-09-19 A (-72d) | 2026-12-01 → 2026-09-20 A (-72d) | 0% → 100% |  |
| RHD4CZ9L05ST2200 | Bedding works for UPVC Pipe Line 300 mm - (RD-L-5)-Z9-L05-ST | 2026-12-02 → 2027-05-02 (+151d) | 2026-12-03 → 2027-05-03 (+151d) |  |  |
| RHD4CZ9L05ST2300 | Installing for UPVC Pipe Line 300 mm - (RD-L-5)-Z9-L05-ST | 2026-12-05 → 2027-05-04 (+150d) | 2026-12-06 → 2027-05-05 (+150d) |  |  |
| RHD4CZ9L05ST2400 | Primary Test for UPVC Pipe Line 300 mm - (RD-L-5)-Z9-L05-ST | 2026-12-07 → 2027-05-06 (+150d) | 2026-12-08 → 2027-05-08 (+151d) |  |  |
| RHD4CZ9L05ST2500 | Backfilling and warning tape works for UPVC Pipe Line 300 mm - (RD-L-5)-Z9-L05-ST | 2026-12-09 → 2027-05-11 (+153d) | 2026-12-10 → 2027-05-12 (+153d) |  |  |
| 8865 | **RHD4-02-002-L05-(ST)-Concrete Encasement** | 2026-12-05 → 2027-05-04 (+150d) | 2026-12-06 → 2027-05-05 (+150d) |  |  |
| RHD4CZ9L05ST6100 | Pipe Encasement for Storm Pipelines - (RD-L-5)-Z9-L05-ST | 2026-12-05 → 2027-05-04 (+150d) | 2026-12-06 → 2027-05-05 (+150d) |  | resources Skilled labor [0.76 h]; Unskilled Labor [0.76 h]; Equipment Opreator [0.87 h]; Concrete Mixer Truck [0.11 h]; Dump Truck [0.76 h]; Pipe Encasement - ST [14.89 m3] → Skilled labor [0.8 h]; Unskilled Labor [0.8 h]; Equipment Opreator [0.87 h]; Concrete Mixer Truck [0.11 h]; Dump Truck [0.8 h]; Pipe Encasement - ST [14.89 m3] |
| 8866 | **RHD4-02-002-Z9-L05-Catch Basin - ST** |  | 2026-09-10 → 2027-02-07 (+150d) |  |  |
| 8867 | **RHD4-02-002-L05-(ST)-Single Catch Basin Works** |  | 2026-09-10 → 2027-02-07 (+150d) |  |  |
| RHD4CZ9L05ST7100 | Excavation works for Single Catch Basin - (RD-L-5)-Z9-L05-ST | 2026-08-29 A | 2026-08-30 → 2026-09-20 A (+21d) | 0% → 100% | resources Skilled labor [3.27 h]; Unskilled Labor [6.53 h]; Equipment Opreator [4.9 h]; Excavator-Poclain [3.27 h]; Dump Truck [1.63 h]; Single Catch basin - ST [0.75 nr] → Skilled labor [3.27 h]; Unskilled Labor [6.53 h]; Equipment Opreator [4.9 h]; Excavator-Poclain [3.27 h]; Dump Truck [1.6 h]; Single Catch basin - ST [0.75 nr] |
| RHD4CZ9L05ST7200 | PC Blinding, Installation and Pipe connection for Single Catch Basin - (RD-L-5)-Z9-L05-ST | 2026-08-31 → 2026-10-27 A (+57d) | 2026-09-01 → 2027-01-31 (+152d) | 0% → 67% | resources Skilled labor [3.27 h]; Unskilled Labor [6.53 h]; Plumber [1.63 h]; Equipment Opreator [0.65 h]; Boom Truck [0.65 h]; Single Catch basin - ST [0.6 nr] → Skilled labor [3.27 h]; Unskilled Labor [6.53 h]; Plumber [1.6 h]; Equipment Opreator [0.65 h]; Boom Truck [0.65 h]; Single Catch basin - ST [0.6 nr] |
| RHD4CZ9L05ST7300 | Rings & C.Slab & Final Backfill for Single Catch Basin - (RD-L-5)-Z9-L05-ST | 2026-09-05 → 2026-10-29 A (+54d) | 2026-09-06 → 2027-02-02 (+149d) | 0% → 67% |  |
| RHD4CZ9L05ST7400 | Steel Cover for Single Catch Basin - (RD-L-5)-Z9-L05-ST | 2026-09-07 → 2027-02-03 (+149d) | 2026-09-08 → 2027-02-04 (+149d) |  |  |
| RHD4CZ9L05ST7500 | Finishing and Insulation works for Single Catch Basin - (RD-L-5)-Z9-L05-ST | 2026-09-09 → 2027-02-06 (+150d) | 2026-09-10 → 2027-02-07 (+150d) |  |  |
| 8891 | **RHD4-02-002-Z9-L05-Sewage Network - SW** | 2026-12-12 → 2027-05-13 (+152d) | 2027-01-05 → 2027-06-12 (+158d) |  |  |
| 1895 | **RHD4-02-002-L05-(SW)-GRP Pipes - 500 mm diameter** | 2026-12-12 → 2027-05-13 (+152d) | 2026-12-22 → 2027-05-29 (+158d) |  |  |
| RHD4CZ9L05SW1102 | Excavation works for GRP Pipe Line 500 mm - (RD-L-5)-Z9-L05-SW | 2026-12-12 → 2027-05-13 (+152d) | 2026-12-13 → 2027-05-19 (+157d) |  |  |
| RHD4CZ9L05SW1202 | Bedding works for GRP Pipe Line 500 mm - (RD-L-5)-Z9-L05-SW | 2026-12-14 → 2027-05-20 (+157d) | 2026-12-15 → 2027-05-22 (+158d) |  |  |
| RHD4CZ9L05SW1302 | Installing for GRP Pipe Line 500 mm - (RD-L-5)-Z9-L05-SW | 2026-12-16 → 2027-05-23 (+158d) | 2026-12-17 → 2027-05-24 (+158d) |  |  |
| RHD4CZ9L05SW1402 | Primary Test for GRP Pipe Line 500 mm - (RD-L-5)-Z9-L05-SW | 2026-12-19 → 2027-05-25 (+157d) | 2026-12-20 → 2027-05-26 (+157d) |  |  |
| RHD4CZ9L05SW1502 | Backfilling and warning tape works for GRP Pipe Line 500 mm - (RD-L-5)-Z9-L05-SW | 2026-12-21 → 2027-05-27 (+157d) | 2026-12-22 → 2027-05-29 (+158d) |  |  |
| 3794 | **RHD4-02-002-L05-(SW)-MH Works - 1200 mm diameter** | 2026-12-14 → 2027-05-20 (+157d) | 2027-01-05 → 2027-06-12 (+158d) |  |  |
| RHD4CZ9L05SW3100 | Excavation and PC Blinding works for MH 1200 mm - (RD-L-5)-Z9-L05-SW | 2026-12-14 → 2027-05-20 (+157d) | 2026-12-16 → 2027-05-23 (+158d) |  | resources Skilled labor [27.23 h]; Unskilled Labor [27.23 h]; Equipment Opreator [43.56 h]; Excavator-Poclain [27.23 h]; Water Truck [2.72 h]; Dump Truck [13.61 h]; MH (1200mm Diameter) - SW - depth 3.51 -4.5m [1.25 nr] → Skilled labor [27.2 h]; Unskilled Labor [27.2 h]; Equipment Opreator [43.56 h]; Excavator-Poclain [27.2 h]; Water Truck [2.72 h]; Dump Truck [13.6 h]; MH (1200mm Diameter) - SW - depth 3.51 -4.5m [1.25 nr] |
| RHD4CZ9L05SW3200 | Installation of Base for MH 1200 mm - (RD-L-5)-Z9-L05-SW | 2026-12-17 → 2027-05-24 (+158d) | 2026-12-22 → 2027-05-29 (+158d) |  |  |
| RHD4CZ9L05SW3300 | MH Ring and C.Slab works and Backfilling works for MH 1200 mm - (RD-L-5)-Z9-L05-SW | 2026-12-23 → 2027-05-30 (+158d) | 2026-12-28 → 2027-06-03 (+157d) |  |  |
| RHD4CZ9L05SW3400 | Steel Cover for MH 1200 mm - (RD-L-5)-Z9-L05-SW | 2026-12-29 → 2027-06-05 (+158d) | 2026-12-30 → 2027-06-06 (+158d) |  |  |
| RHD4CZ9L05SW3500 | Finishing, Benching, Testing works for MH 1200 mm - (RD-L-5)-Z9-L05-SW | 2026-12-31 → 2027-06-07 (+158d) | 2027-01-05 → 2027-06-12 (+158d) |  |  |
| 8928 | **RHD4-02-002-Z9-L05-Potable Network - PT** | 2026-12-23 → 2027-05-30 (+158d) | 2027-01-14 → 2027-06-21 (+158d) |  |  |
| 8930 | **RHD4-02-002-L05-(PT)-HDPE Pipes - 160 mm diameter** | 2026-12-23 → 2027-05-30 (+158d) | 2027-01-03 → 2027-06-09 (+157d) |  |  |
| RHD4CZ9L05PT1101 | Excavation works for HDPE Pipline 160 mm - (RD-L-5)-Z9-L05-PT | 2026-12-23 → 2027-05-30 (+158d) | 2026-12-24 → 2027-05-31 (+158d) |  |  |
| RHD4CZ9L05PT1201 | Bedding works for HDPE Pipline 160 mm - (RD-L-5)-Z9-L05-PT | 2026-12-26 → 2027-06-01 (+157d) | 2026-12-27 → 2027-06-02 (+157d) |  |  |
| RHD4CZ9L05PT1301 | Installing for HDPE Pipline 160 mm - (RD-L-5)-Z9-L05-PT | 2026-12-28 → 2027-06-03 (+157d) | 2026-12-29 → 2027-06-05 (+158d) |  |  |
| RHD4CZ9L05PT1401 | Primary Test for HDPE Pipline 160 mm - (RD-L-5)-Z9-L05-PT | 2026-12-30 → 2027-06-06 (+158d) | 2026-12-31 → 2027-06-07 (+158d) |  |  |
| RHD4CZ9L05PT1501 | Backfilling and warning tape works for HDPE Pipline 160 mm - (RD-L-5)-Z9-L05-PT | 2027-01-02 → 2027-06-08 (+157d) | 2027-01-03 → 2027-06-09 (+157d) |  |  |
| 6483 | **RHD4-02-002-L05-(PT)-Concrete Encasement** | 2026-12-28 → 2027-06-03 (+157d) | 2026-12-29 → 2027-06-05 (+158d) |  |  |
| RHD4CZ9L05PT5100 | Pipe Encasement for Potable Pipelines - (RD-L-5)-Z9-L05-PT | 2026-12-28 → 2027-06-03 (+157d) | 2026-12-29 → 2027-06-05 (+158d) |  | resources Skilled labor [16.01 h]; Unskilled Labor [16.01 h]; Equipment Opreator [17.53 h]; Concrete Mixer Truck [1.63 h]; Dump Truck [16.01 h]; Pipe Encasement - PT [7.34 m3] → Skilled labor [16 h]; Unskilled Labor [16 h]; Equipment Opreator [17.53 h]; Concrete Mixer Truck [1.6 h]; Dump Truck [16 h]; Pipe Encasement - PT [7.34 m3] |
| 8939 | **RHD4-02-002-L05-(PT)-Air Valve Chambers** | 2026-12-26 → 2027-06-01 (+157d) | 2027-01-03 → 2027-06-09 (+157d) |  |  |
| RHD4CZ9L05PT2102 | Excavation and Bedding for Air Valve Chambers for Potable Water Network - (RD-L-5)-Z9-L05-PT | 2026-12-26 → 2027-06-01 (+157d) | 2026-12-27 → 2027-06-02 (+157d) |  |  |
| RHD4CZ9L05PT2202 | PC works for Air Valve Chambers for Potable Water Network - (RD-L-5)-Z9-L05-PT | 2026-12-28 → 2027-06-03 (+157d) | 2026-12-29 → 2027-06-05 (+158d) |  |  |
| RHD4CZ9L05PT2302 | Installation for Air Valve Chambers for Potable Water Network - (RD-L-5)-Z9-L05-PT | 2026-12-30 → 2027-06-06 (+158d) | 2026-12-31 → 2027-06-07 (+158d) |  |  |
| RHD4CZ9L05PT2402 | Backfilling works for Air Valve Chambers for Potable Water Network - (RD-L-5)-Z9-L05-PT | 2027-01-02 → 2027-06-08 (+157d) | 2027-01-03 → 2027-06-09 (+157d) |  |  |
| 8940 | **RHD4-02-002-L05-(PT)-Air Valves** | 2026-12-30 → 2027-06-06 (+158d) | 2027-01-03 → 2027-06-09 (+157d) |  |  |
| RHD4CZ9L05PT3103 | Installation for Air Valves for Potable Water Network - (RD-L-5)-Z9-L05-PT | 2026-12-30 → 2027-06-06 (+158d) | 2026-12-31 → 2027-06-07 (+158d) |  |  |
| RHD4CZ9L05PT3203 | Stem and Service box for Air Valves for Potable Water Network - (RD-L-5)-Z9-L05-PT | 2027-01-02 → 2027-06-08 (+157d) | 2027-01-03 → 2027-06-09 (+157d) |  |  |
| 8941 | **RHD4-02-002-L05-(PT)-Fire Hydrant** | 2027-01-04 → 2027-06-10 (+157d) | 2027-01-14 → 2027-06-21 (+158d) |  |  |
| RHD4CZ9L05PT4100 | Excavation and Bedding and Pipe Installation for Fire Hydrant - (RD-L-5)-Z9-L05-PT | 2027-01-04 → 2027-06-10 (+157d) | 2027-01-05 → 2027-06-12 (+158d) |  |  |
| RHD4CZ9L05PT4200 | Valve Installation for Fire Hydrant - (RD-L-5)-Z9-L05-PT | 2027-01-06 → 2027-06-13 (+158d) | 2027-01-07 → 2027-06-14 (+158d) |  |  |
| RHD4CZ9L05PT4300 | Stem for Fire Hydrant - (RD-L-5)-Z9-L05-PT | 2027-01-09 → 2027-06-15 (+157d) | 2027-01-10 → 2027-06-16 (+157d) |  |  |
| RHD4CZ9L05PT4400 | Fire Installation for Fire Hydrant - (RD-L-5)-Z9-L05-PT | 2027-01-11 → 2027-06-17 (+157d) | 2027-01-12 → 2027-06-19 (+158d) |  |  |
| RHD4CZ9L05PT4500 | Protection Barriers for Fire Hydrant - (RD-L-5)-Z9-L05-PT | 2027-01-13 → 2027-06-20 (+158d) | 2027-01-14 → 2027-06-21 (+158d) |  |  |
| 8934 | **RHD4-02-002-L05-(PT)-Gate Valves (Direct Buried)** | 2026-12-28 → 2027-06-03 (+157d) | 2027-01-05 → 2027-06-12 (+158d) |  |  |
| RHD4CZ9L05PT3100 | Installation for Direct Buried Gate Valves - (RD-L-5)-Z9-L05-PT | 2026-12-28 → 2027-06-03 (+157d) | 2026-12-29 → 2027-06-05 (+158d) |  |  |
| RHD4CZ9L05PT3200 | Stem and Service box for Direct Buried Gate Valves - (RD-L-5)-Z9-L05-PT | 2027-01-04 → 2027-06-10 (+157d) | 2027-01-05 → 2027-06-12 (+158d) |  |  |
| 8943 | **RHD4-02-002-Z9-L05-Irrigation Network - IRR** | 2027-01-04 → 2027-06-10 (+157d) | 2027-01-14 → 2027-06-21 (+158d) |  |  |
| 8951 | **RHD4-02-002-L05-(IRR)-HDPE Pipes - 500 mm diameter** | 2027-01-04 → 2027-06-10 (+157d) | 2027-01-14 → 2027-06-21 (+158d) |  |  |
| RHD4CZ9L05IRR1107 | Excavation works for HDPE Pipline 500 mm - (RD-L-5)-Z9-L05-IRR | 2027-01-04 → 2027-06-10 (+157d) | 2027-01-05 → 2027-06-12 (+158d) |  |  |
| RHD4CZ9L05IRR1207 | Bedding works for HDPE Pipline 500 mm - (RD-L-5)-Z9-L05-IRR | 2027-01-06 → 2027-06-13 (+158d) | 2027-01-07 → 2027-06-14 (+158d) |  |  |
| RHD4CZ9L05IRR1307 | Installing for HDPE Pipline 500 mm - (RD-L-5)-Z9-L05-IRR | 2027-01-09 → 2027-06-15 (+157d) | 2027-01-10 → 2027-06-16 (+157d) |  |  |
| RHD4CZ9L05IRR1407 | Primary Test for HDPE Pipline 500 mm - (RD-L-5)-Z9-L05-IRR | 2027-01-11 → 2027-06-17 (+157d) | 2027-01-12 → 2027-06-19 (+158d) |  |  |
| RHD4CZ9L05IRR1507 | Backfilling and warning tape works for HDPE Pipline 500 mm - (RD-L-5)-Z9-L05-IRR | 2027-01-13 → 2027-06-20 (+158d) | 2027-01-14 → 2027-06-21 (+158d) |  |  |
| 8977 | **RHD4-02-002-Z9-L05-Medium Voltage Network - MV** | 2026-09-19 → 2027-02-15 (+149d) | 2026-09-28 → 2027-02-24 (+149d) |  |  |
| 8979 | **RHD4-02-002-L05-(MV)-Medium Voltage duct banks** | 2026-09-19 → 2027-02-15 (+149d) | 2026-09-28 → 2027-02-24 (+149d) |  |  |
| RHD4CZ9L05MV2100 | Excavation of Duct Banks for Medium Voltage Network - (RD-L-5)-Z9-L05-MV | 2026-09-19 → 2027-02-15 (+149d) | 2026-09-20 → 2027-02-16 (+149d) |  | resources Unskilled Labor [11.98 h]; Equipment Opreator [24.07 h]; Excavator-Poclain [11.98 h]; Dump Truck [11.98 h]; Duct bank for MV cables UPVC (2xø150mm) [1.65 m] → Unskilled Labor [12 h]; Equipment Opreator [24.07 h]; Excavator-Poclain [12 h]; Dump Truck [12 h]; Duct bank for MV cables UPVC (2xø150mm) [1.65 m] |
| RHD4CZ9L05MV2200 | Installation of Duct Banks for Medium Voltage Network - (RD-L-5)-Z9-L05-MV | 2026-09-21 → 2027-02-17 (+149d) | 2026-09-22 → 2027-02-18 (+149d) |  |  |
| RHD4CZ9L05MV2300 | Pouring of Duct Banks for Medium Voltage Network - (RD-L-5)-Z9-L05-MV | 2026-09-24 → 2027-02-20 (+149d) | 2026-09-26 → 2027-02-21 (+148d) |  | resources Unskilled Labor [11.98 h]; Equipment Opreator [24.07 h]; Excavator-Poclain [11.98 h]; Dump Truck [11.98 h]; Duct bank for MV cables UPVC (2xø150mm) [10.75 m] → Unskilled Labor [12 h]; Equipment Opreator [24.07 h]; Excavator-Poclain [12 h]; Dump Truck [12 h]; Duct bank for MV cables UPVC (2xø150mm) [10.75 m] |
| RHD4CZ9L05MV2400 | Backfilling of Duct Banks for Medium Voltage Network - (RD-L-5)-Z9-L05-MV | 2026-09-27 → 2027-02-23 (+149d) | 2026-09-28 → 2027-02-24 (+149d) |  |  |
| 8980 | **RHD4-02-002-L05-(MV)-Medium Voltage cables 3Cx 500 mm²** | 2026-09-19 → 2027-02-15 (+149d) | 2026-09-22 → 2027-02-18 (+149d) |  |  |

| ID | Task | Start | Finish | Duration | Complete | Other |
| --- | --- | --- | --- | --- | --- | --- |
| RHD4CZ9L05MV3100 | Installation of Medium Voltage Cables 3Cx 500 mm² - (RD-L-5)-Z9-L05-MV | 2026-09-19 → 2027-02-15 (+149d) | 2026-09-20 → 2027-02-16 (+149d) |  |  | resources Skilled labor [1.2 h]; Unskilled Labor [4.79 h]; Electrician [2.4 h]; Equipment Opreator [3.59 h]; Boom Truck [1.2 h]; Cable Laying Machine [2.4 h]; Cable 13.8 kV 3Cx 500 mm² Al/XLPE,/LLDPE / Unarmored [14.89 m] → Skilled labor [1.2 h]; Unskilled Labor [4.8 h]; Electrician [2.4 h]; Equipment Opreator [3.59 h]; Boom Truck [1.2 h]; Cable Laying Machine [2.4 h]; Cable 13.8 kV 3Cx 500 mm² Al/XLPE,/LLDPE / Unarmored [14.89 m] |
| RHD4CZ9L05MV3300 | Testing of Medium Voltage Cables 3Cx 500 mm² - (RD-L-5)-Z9-L05-MV | 2026-09-21 → 2027-02-17 (+149d) | 2026-09-22 → 2027-02-18 (+149d) |  |  | resources Skilled labor [0.33 h]; Unskilled Labor [1.42 h]; Electrician [0.76 h]; Cable 13.8 kV 3Cx 500 mm² Al/XLPE,/LLDPE / Unarmored [1.65 m] → Skilled labor [0.33 h]; Unskilled Labor [1.42 h]; Electrician [0.8 h]; Cable 13.8 kV 3Cx 500 mm² Al/XLPE,/LLDPE / Unarmored [1.65 m] |
| 8984 | **RHD4-02-002-Z9-L05-Low Voltage Network - LV** | 2027-01-16 → 2027-06-22 (+157d) | 2027-01-28 → 2027-07-05 (+158d) |  |  |  |
| 8987 | **RHD4-02-002-L05-(LV)-Low Voltage cables** | 2027-01-16 → 2027-06-22 (+157d) | 2027-01-28 → 2027-07-05 (+158d) |  |  |  |
| RHD4CZ9L05LV3100 | Excavation for Low Voltage Cables for Low Voltage Network - (RD-L-5)-Z9-L05-LV | 2027-01-16 → 2027-06-22 (+157d) | 2027-01-19 → 2027-06-26 (+158d) |  |  |  |
| RHD4CZ9L05LV3200 | Cable Laying of Low Voltage Cables for Low Voltage Network - (RD-L-5)-Z9-L05-LV | 2027-01-20 → 2027-06-27 (+158d) | 2027-01-23 → 2027-06-29 (+157d) |  |  |  |
| RHD4CZ9L05LV3300 | Warning tape and Backfill for Low Voltage Cables for Low Voltage Network - (RD-L-5)-Z9-L05-LV | 2027-01-24 → 2027-06-30 (+157d) | 2027-01-26 → 2027-07-03 (+158d) |  |  |  |
| RHD4CZ9L05LV3400 | Testing of Low Voltage Cables for Low Voltage Network - (RD-L-5)-Z9-L05-LV | 2027-01-27 → 2027-07-04 (+158d) | 2027-01-28 → 2027-07-05 (+158d) |  |  |  |
| 8990 | **RHD4-02-002-Z9-L05-Street Lighting Network - SL** | 2027-01-04 → 2027-06-10 (+157d) | 2027-02-28 → 2027-08-03 (+156d) |  |  |  |
| 8991 | **RHD4-02-002-L05-(SL)-Street Lighting duct banks** | 2027-01-04 → 2027-06-10 (+157d) | 2027-01-12 → 2027-06-19 (+158d) |  |  |  |
| RHD4CZ9L05SL2100 | Excavation of Duct Banks for Street Lighting Network - (RD-L-5)-Z9-L05-SL | 2027-01-04 → 2027-06-10 (+157d) | 2027-01-05 → 2027-06-12 (+158d) |  |  |  |
| RHD4CZ9L05SL2200 | Installation of Duct Banks for Street Lighting Network - (RD-L-5)-Z9-L05-SL | 2027-01-06 → 2027-06-13 (+158d) | 2027-01-07 → 2027-06-14 (+158d) |  |  |  |
| RHD4CZ9L05SL2300 | Pouring of Duct Banks for Street Lighting Network - (RD-L-5)-Z9-L05-SL | 2027-01-09 → 2027-06-15 (+157d) | 2027-01-10 → 2027-06-16 (+157d) |  |  |  |
| RHD4CZ9L05SL2400 | Backfilling of Duct Banks for Street Lighting Network - (RD-L-5)-Z9-L05-SL | 2027-01-11 → 2027-06-17 (+157d) | 2027-01-12 → 2027-06-19 (+158d) |  |  |  |
| 8992 | **RHD4-02-002-L05-(SL)-Street Lighting Drawpit** | 2027-01-30 → 2027-07-06 (+157d) | 2027-02-02 → 2027-07-10 (+158d) |  |  |  |
| RHD4CZ9L05SL5100 | Excavation of Drawpit size 600x600x900mm for Street Lighting Network - (RD-L-5)-Z9-L05-SL | 2027-01-30 → 2027-07-06 (+157d) | 2027-01-31 → 2027-07-07 (+157d) |  |  | resources Skilled labor [1.85 h]; Unskilled Labor [1.85 h]; Equipment Opreator [1.42 h]; Excavator-Poclain [0.76 h]; Dump Truck [0.76 h]; Drawpit with medium duty steel cover, size600x600x900mm, [0.3 Unit] → Skilled labor [1.85 h]; Unskilled Labor [1.85 h]; Equipment Opreator [1.42 h]; Excavator-Poclain [0.8 h]; Dump Truck [0.8 h]; Drawpit with medium duty steel cover, size600x600x900mm, [0.3 Unit] |
| RHD4CZ9L05SL5200 | Installation of Drawpit size 600x600x900mm for Street Lighting Network - (RD-L-5)-Z9-L05-SL | 2027-02-01 → 2027-07-08 (+157d) | 2027-02-02 → 2027-07-10 (+158d) |  |  | resources Skilled labor [1.85 h]; Unskilled Labor [1.85 h]; Equipment Opreator [0.76 h]; Boom Truck [0.76 h]; Drawpit with medium duty steel cover, size600x600x900mm, [1.7 Unit] → Skilled labor [1.85 h]; Unskilled Labor [1.85 h]; Equipment Opreator [0.8 h]; Boom Truck [0.8 h]; Drawpit with medium duty steel cover, size600x600x900mm, [1.7 Unit] |
| 8993 | **RHD4-02-002-L05-(SL)-Street Lighting cables** | 2027-02-03 → 2027-07-11 (+158d) | 2027-02-13 → 2027-07-20 (+157d) |  |  |  |
| RHD4CZ9L05SL3100 | Excavation for Street Lighting Cables for Street Lighting Network - (RD-L-5)-Z9-L05-SL | 2027-02-03 → 2027-07-11 (+158d) | 2027-02-06 → 2027-07-13 (+157d) |  |  |  |
| RHD4CZ9L05SL3200 | Cable Laying of Street Lighting Cables for Street Lighting Network - (RD-L-5)-Z9-L05-SL | 2027-02-07 → 2027-07-14 (+157d) | 2027-02-08 → 2027-07-15 (+157d) |  |  |  |
| RHD4CZ9L05SL3300 | Warning tape and Backfill for Street Lighting Cables for Street Lighting Network - (RD-L-5)-Z9-L05-SL | 2027-02-09 → 2027-07-17 (+158d) | 2027-02-10 → 2027-07-18 (+158d) |  |  |  |
| RHD4CZ9L05SL3400 | Testing of Street Lighting Cables for Street Lighting Network - (RD-L-5)-Z9-L05-SL | 2027-02-11 → 2027-07-19 (+158d) | 2027-02-13 → 2027-07-20 (+157d) |  |  |  |
| 8994 | **RHD4-02-002-L05-(SL)-Street Lighting Poles** | 2027-02-14 → 2027-07-21 (+157d) | 2027-02-25 → 2027-08-01 (+157d) |  |  |  |
| RHD4CZ9L05SL1100 | Excavation for RC Base for Lighting Poles for Street Lighting Network - (RD-L-5)-Z9-L05-SL | 2027-02-14 → 2027-07-21 (+157d) | 2027-02-15 → 2027-07-22 (+157d) |  |  |  |
| RHD4CZ9L05SL1200 | Installation for RC Base for Lighting Poles for Street Lighting Network - (RD-L-5)-Z9-L05-SL | 2027-02-16 → 2027-07-24 (+158d) | 2027-02-17 → 2027-07-25 (+158d) |  |  |  |
| RHD4CZ9L05SL1300 | Backfill for RC Base for Lighting Poles for Street Lighting Network - (RD-L-5)-Z9-L05-SL | 2027-02-18 → 2027-07-26 (+158d) | 2027-02-20 → 2027-07-27 (+157d) |  |  |  |
| RHD4CZ9L05SL1400 | Installation for Lighting Poles for Street Lighting Network - (RD-L-5)-Z9-L05-SL | 2027-02-21 → 2027-07-28 (+157d) | 2027-02-23 → 2027-07-29 (+156d) |  |  |  |
| RHD4CZ9L05SL1500 | Luminaire Installation for Lighting Poles for Street Lighting Network - (RD-L-5)-Z9-L05-SL | 2027-02-24 → 2027-07-31 (+157d) | 2027-02-25 → 2027-08-01 (+157d) |  |  |  |
| 8996 | **RHD4-02-002-L05-(SL)-Street Lighting Earthing System** | 2027-02-27 → 2027-08-02 (+156d) | 2027-02-28 → 2027-08-03 (+156d) |  |  |  |
| RHD4CZ9L05SL6100 | Installation of Earthing for Lighting Poles and Fedder Pillers for Street Lighting Network - (RD-L-5)-Z9-L05-SL | 2027-02-27 → 2027-08-02 (+156d) | 2027-02-28 → 2027-08-03 (+156d) |  |  | resources Skilled labor [0.76 h]; Unskilled Labor [0.76 h]; Equipment Opreator [1.42 h]; Excavator-Poclain [0.76 h]; Dump Truck [0.76 h]; Including lighting poles circuits - ER [1 Unit] → Skilled labor [0.8 h]; Unskilled Labor [0.8 h]; Equipment Opreator [1.42 h]; Excavator-Poclain [0.8 h]; Dump Truck [0.8 h]; Including lighting poles circuits - ER [1 Unit] |
| 9002 | **RHD4-02-002-Z9-L05-Telecommunications Network - TC** | 2027-03-01 → 2027-08-04 (+156d) | 2027-03-20 → 2027-08-19 (+152d) |  |  |  |
| 9003 | **RHD4-02-002-L05-(TC)-Telecommunications Ducts** | 2027-03-01 → 2027-08-04 (+156d) | 2027-03-15 → 2027-08-15 (+153d) |  |  |  |
| RHD4CZ9L05TC2100 | Excavation of HDPE Ducts for Telecom Network - (RD-L-5)-Z9-L05-TC | 2027-03-01 → 2027-08-04 (+156d) | 2027-03-03 → 2027-08-07 (+157d) |  |  | resources Skilled labor [22.76 h]; Unskilled Labor [22.76 h]; Equipment Opreator [45.63 h]; Excavator-Poclain [22.76 h]; Dump Truck [22.76 h]; (6*50mm) HDPE ducts -TC [56.42 m]; (6*50mm+2*32mm) HDPE ducts -TC [5.88 m]; (2*32mm) HDPE ducts -TC [0.5 m] → Skilled labor [22.76 h]; Unskilled Labor [22.76 h]; Equipment Opreator [45.6 h]; Excavator-Poclain [22.76 h]; Dump Truck [22.76 h]; (6*50mm) HDPE ducts -TC [56.42 m]; (6*50mm+2*32mm) HDPE ducts -TC [5.88 m]; (2*32mm) HDPE ducts -TC [0.5 m] |
| RHD4CZ9L05TC2200 | Installation of HDPE Ducts for Telecom Network - (RD-L-5)-Z9-L05-TC | 2027-03-04 → 2027-08-08 (+157d) | 2027-03-08 → 2027-08-11 (+156d) |  |  |  |
| RHD4CZ9L05TC2400 | Backfilling of HDPE Ducts for Telecom Network - (RD-L-5)-Z9-L05-TC | 2027-03-13 → 2027-08-12 (+152d) | 2027-03-15 → 2027-08-15 (+153d) |  |  |  |
| 9004 | **RHD4-02-002-L05-(TC)-Telecommunications Manholes** | 2027-03-16 → 2027-08-16 (+153d) | 2027-03-20 → 2027-08-19 (+152d) |  |  |  |
| RHD4CZ9L05TC5100 | Excavation for Manholes for Telecom Network - (RD-L-5)-Z9-L05-TC | 2027-03-16 → 2027-08-16 (+153d) | 2027-03-17 → 2027-08-17 (+153d) |  |  |  |
| RHD4CZ9L05TC5200 | Installation of Manholes for Telecom Network - (RD-L-5)-Z9-L05-TC | 2027-03-18 → 2027-08-18 (+153d) | 2027-03-20 → 2027-08-19 (+152d) |  |  |  |
| 9006 | **RHD4-02-002-Z9-L05-Information and Communication Technologies - ICT** | 2027-03-21 → 2027-08-21 (+153d) | 2027-03-27 → 2027-08-26 (+152d) |  |  |  |
| 9007 | **RHD4-02-002-L05-(ICT)-Information and Communication Technologies Ducts** | 2027-03-21 → 2027-08-21 (+153d) | 2027-03-27 → 2027-08-26 (+152d) |  |  |  |
| RHD4CZ9L05ICT2100 | Excavation of HDPE Ducts for ICT Network - (RD-L-5)-Z9-L05-ICT | 2027-03-21 → 2027-08-21 (+153d) | 2027-03-22 → 2027-08-22 (+153d) |  |  |  |
| RHD4CZ9L05ICT2200 | Installation of HDPE Ducts for ICT Network - (RD-L-5)-Z9-L05-ICT | 2027-03-23 → 2027-08-23 (+153d) | 2027-03-24 → 2027-08-24 (+153d) |  |  |  |
| RHD4CZ9L05ICT2400 | Backfilling of HDPE Ducts for ICT Network - (RD-L-5)-Z9-L05-ICT | 2027-03-25 → 2027-08-25 (+153d) | 2027-03-27 → 2027-08-26 (+152d) |  |  | resources Skilled labor [12.09 h]; Unskilled Labor [12.09 h]; Equipment Opreator [4.79 h]; Excavator-Poclain [4.79 h]; (2*50mm) HDPE ducts -ICT [24.89 m] → Skilled labor [12.09 h]; Unskilled Labor [12.09 h]; Equipment Opreator [4.8 h]; Excavator-Poclain [4.8 h]; (2*50mm) HDPE ducts -ICT [24.89 m] |
| 9027 | **RHD4-02-002-Z9-L06** |  | 2027-07-21 → 2027-11-14 (+116d) |  |  |  |
| 9206 | **RHD4-02-002-Z9-L06-Road Works - RD** | 2026-09-09 → 2027-02-01 (+145d) | 2027-07-21 → 2027-11-14 (+116d) |  |  |  |
| 9207 | **RHD4-02-002-L06-(RD)-Subgrade** | 2026-09-09 → 2027-02-01 (+145d) | 2026-09-19 → 2027-02-10 (+144d) |  |  |  |
| RHD4CZ9L06RD1100 | Supply, lay and compaction subgrade compacted thickness 300 mm for Roads - (RD-L-6)-Z9-L06-RD | 2026-09-09 → 2027-02-01 (+145d) | 2026-09-19 → 2027-02-10 (+144d) |  |  | resources Skilled labor [92.68 h]; Unskilled Labor [185.46 h]; Electrician [92.68 h]; Equipment Opreator [633.27 h]; Water Truck [30.6 h]; Roller compactor [46.39 h]; Grader [92.68 h]; Dump Truck [463.6 h]; Subgrade [4459.16 m3] → Skilled labor [92.68 h]; Unskilled Labor [185.46 h]; Electrician [92.68 h]; Equipment Opreator [633.27 h]; Water Truck [30.6 h]; Roller compactor [46.4 h]; Grader [92.68 h]; Dump Truck [463.6 h]; Subgrade [4459.16 m3] |
| 9208 | **RHD4-02-002-L06-(RD)-Aggregate Base Course** | 2026-09-20 → 2027-02-11 (+144d) | 2026-09-28 → 2027-02-18 (+143d) |  |  |  |
| RHD4CZ9L06RD2100 | Supply, lay and compaction Aggregate base course compacted thickness 300 mmfor Roads - (RD-L-6)-Z9-L06-RD | 2026-09-20 → 2027-02-11 (+144d) | 2026-09-28 → 2027-02-18 (+143d) |  |  |  |
| 9209 | **RHD4-02-002-L06-(RD)-Bituminous base course Two Layers, including (MC1)&(RC2)** | 2026-09-29 → 2027-03-04 (+156d) | 2027-06-24 → 2027-10-11 (+109d) |  |  |  |
| RHD4CZ9L06RD3100 | Supply, lay and Asphaltic base course including Prime Coat (MC1) for 1st Layer - (RD-L-6)-Z9-L06-RD | 2026-09-29 → 2027-03-04 (+156d) | 2026-09-30 → 2027-03-06 (+157d) |  |  |  |
| RHD4CZ9L06RD3200 | Supply, lay and Asphaltic base course including Tack Coat (RC2) for 2nd Layer - (RD-L-6)-Z9-L06-RD | 2027-06-23 → 2027-10-10 (+109d) | 2027-06-24 → 2027-10-11 (+109d) |  |  |  |
| 9211 | **RHD4-02-002-L06-(RD)-Precast Concrete Curb** | 2027-06-26 → 2027-10-12 (+108d) | 2027-06-29 → 2027-10-16 (+109d) |  |  |  |
| RHD4CZ9L06RD5100 | Supply and installation Precast Concrete Kerb for Roads - (RD-L-6)-Z9-L06-RD | 2027-06-26 → 2027-10-12 (+108d) | 2027-06-29 → 2027-10-16 (+109d) |  |  |  |
| 9214 | **RHD4-02-002-L06-(RD)-Traffic Signage** | 2027-06-30 → 2027-10-17 (+109d) | 2027-07-08 → 2027-10-25 (+109d) |  |  |  |
| RHD4CZ9L06RD8100 | Installation of Traffic Signage for Road Network - (RD-L-6)-Z9-L06-RD | 2027-06-30 → 2027-10-17 (+109d) | 2027-07-08 → 2027-10-25 (+109d) |  |  | resources Skilled labor [174.25 h]; Unskilled Labor [87.12 h]; Electrician [35.94 h]; Equipment Opreator [31.8 h]; Boom Truck [17.42 h]; Concrete Mixer Truck [14.38 h]; Traffic signs, ground mounted, 1 Sheet Aluminium, (breakaway)Single post [31 nr] → Skilled labor [174.25 h]; Unskilled Labor [87.12 h]; Electrician [35.94 h]; Equipment Opreator [31.8 h]; Boom Truck [17.42 h]; Concrete Mixer Truck [14.4 h]; Traffic signs, ground mounted, 1 Sheet Aluminium, (breakaway)Single post [31 nr] |
| 9212 | **RHD4-02-002-L06-(RD)-Precast Interlocking Block Pavers** | 2027-07-10 → 2027-10-26 (+108d) | 2027-07-17 → 2027-11-04 (+110d) |  |  |  |
| RHD4CZ9L06RD6100 | Interlocking block pavers for sidewalk-footpath for Side walks and Parking areas - (RD-L-6)-Z9-L06-RD | 2027-07-10 → 2027-10-26 (+108d) | 2027-07-17 → 2027-11-04 (+110d) | 7d → 9d |  | resources Skilled labor [180.24 h]; Unskilled Labor [270.41 h]; Equipment Opreator [292.95 h]; Boom Truck [90.17 h]; Bobcat [90.17 h]; Concrete Mixer Truck [90.17 h]; Water Truck [22.54 h]; Interlock 80 mm thick Pavers for parking including sand fill [2069 m2] → Skilled labor [180.24 h]; Unskilled Labor [270.4 h]; Equipment Opreator [292.95 h]; Boom Truck [90.17 h]; Bobcat [90.17 h]; Concrete Mixer Truck [90.17 h]; Water Truck [22.54 h]; Interlock 80 mm thick Pavers for parking including sand fill [2069 m2] |
| 9210 | **RHD4-02-002-L06-(RD)-Bituminous concrete wearing course including tack coat (RC2)** | 2027-07-18 → 2027-11-06 (+111d) | 2027-07-19 → 2027-11-07 (+111d) |  |  |  |
| RHD4CZ9L06RD4100 | Supply, lay and compaction Asphaltic wearing course including tack Coat (RC2)for Road Network - (RD-L-6)-Z9-L06-RD | 2027-07-18 → 2027-11-06 (+111d) | 2027-07-19 → 2027-11-07 (+111d) |  |  | resources Skilled labor [11.98 h]; Unskilled Labor [71.99 h]; Equipment Opreator [180.02 h]; Bobcat [11.98 h]; Roller compactor [11.98 h]; Asphalt Paver [11.98 h]; Rubber Compactor [23.96 h]; MC1/RC2 Sprinkler [11.98 h]; Dump Truck [108.03 h]; Bituminous concrete wearing course, (Grading I - Class A), including tack coat (RC2) [572.3 m3] → Skilled labor [12 h]; Unskilled Labor [72 h]; Equipment Opreator [180 h]; Bobcat [12 h]; Roller compactor [12 h]; Asphalt Paver [12 h]; Rubber Compactor [23.96 h]; MC1/RC2 Sprinkler [12 h]; Dump Truck [108 h]; Bituminous concrete wearing course, (Grading I - Class A), including tack coat (RC2) [572.3 m3] |
| 9213 | **RHD4-02-002-L06-(RD)-Pavement Marking** | 2027-07-20 → 2027-11-08 (+111d) | 2027-07-21 → 2027-11-14 (+116d) |  |  |  |
| RHD4CZ9L06RD7100 | Pavement Markings for Road Network - (RD-L-6)-Z9-L06-RD | 2027-07-20 → 2027-11-08 (+111d) | 2027-07-21 → 2027-11-14 (+116d) | 2d → 6d |  |  |
| 9031 | **RHD4-02-002-Z9-L06-Storm Network - ST** |  | 2027-01-30 → 2027-05-30 (+120d) |  |  |  |
| 5251 | **RHD4-02-002-L06-(ST)-GRP Pipes - 600 mm diameter** | 2026-12-12 → 2026-08-30 (-104d) | 2026-12-22 → 2027-05-05 (+134d) |  |  |  |
| RHD4CZ9L06ST1102 | Excavation works for GRP Pipe Line 600 mm - (RD-L-6)-Z9-L06-ST | 2026-12-12 → 2026-08-30 A (-104d) | 2026-12-13 → 2026-08-31 A (-104d) |  | 0% → 100% |  |
| RHD4CZ9L06ST1202 | Bedding works for GRP Pipe Line 600 mm - (RD-L-6)-Z9-L06-ST | 2026-12-14 → 2026-09-01 A (-104d) | 2026-12-15 → 2026-09-02 A (-104d) |  | 0% → 100% |  |
| RHD4CZ9L06ST1302 | Installing for GRP Pipe Line 600 mm - (RD-L-6)-Z9-L06-ST | 2026-12-16 → 2026-09-05 A (-102d) | 2026-12-17 → 2026-09-06 A (-102d) |  | 0% → 100% |  |
| RHD4CZ9L06ST1502 | Backfilling and warning tape works for GRP Pipe Line 600 mm - (RD-L-6)-Z9-L06-ST | 2026-12-21 → 2026-09-07 A (-105d) | 2026-12-22 → 2026-09-08 A (-105d) |  | 0% → 100% |  |
| RHD4CZ9L06ST1402 | Primary Test for GRP Pipe Line 600 mm - (RD-L-6)-Z9-L06-ST | 2026-12-19 → 2027-05-04 (+136d) | 2026-12-20 → 2027-05-05 (+136d) |  |  |  |
| 9048 | **RHD4-02-002-L06-(ST)-MH Works - 1200 mm diameter** | 2027-01-11 → 2026-09-19 (-114d) | 2027-01-21 → 2027-05-30 (+129d) |  |  |  |

| ID | Task | Start | Finish | Complete | Other |
| --- | --- | --- | --- | --- | --- |
| RHD4CZ9L06ST3100 | Excavation and PC Blinding works for MH 1200 mm - (RD-L-6)-Z9-L06-ST | 2027-01-11 → 2026-09-19 A (-114d) | 2027-01-12 → 2026-09-20 A (-114d) | 0% → 100% | resources Skilled labor [7.3 h]; Unskilled Labor [7.3 h]; Equipment Opreator [11.65 h]; Excavator-Poclain [7.3 h]; Water Truck [0.76 h]; Dump Truck [3.59 h]; MH (1200mm Diameter) - ST - depth 1.50 - 2.5m [0.5 nr] → Skilled labor [7.3 h]; Unskilled Labor [7.3 h]; Equipment Opreator [11.65 h]; Excavator-Poclain [7.3 h]; Water Truck [0.8 h]; Dump Truck [3.59 h]; MH (1200mm Diameter) - ST - depth 1.50 - 2.5m [0.5 nr] |
| RHD4CZ9L06ST3200 | Installation of Base for MH 1200 mm - (RD-L-6)-Z9-L06-ST | 2027-01-13 → 2026-09-26 A (-109d) | 2027-01-14 → 2027-05-12 (+118d) | 0% → 50% |  |
| RHD4CZ9L06ST3300 | MH Ring and C.Slab works and Backfilling works for MH 1200 mm - (RD-L-6)-Z9-L06-ST | 2027-01-16 → 2027-05-13 (+117d) | 2027-01-17 → 2027-05-19 (+122d) |  |  |
| RHD4CZ9L06ST3400 | Steel Cover for MH 1200 mm - (RD-L-6)-Z9-L06-ST | 2027-01-18 → 2027-05-26 (+128d) | 2027-01-19 → 2027-05-27 (+128d) |  |  |
| RHD4CZ9L06ST3500 | Finishing, Benching, Testing works for MH 1200 mm - (RD-L-6)-Z9-L06-ST | 2027-01-20 → 2027-05-29 (+129d) | 2027-01-21 → 2027-05-30 (+129d) |  |  |
| 9049 | **RHD4-02-002-L06-(ST)-MH Works - 1500 mm diameter** | 2027-01-06 → 2026-09-19 (-109d) | 2027-01-27 → 2027-05-23 (+116d) |  |  |
| RHD4CZ9L06ST3101 | Excavation and PC Blinding works for MH 1500 mm - (RD-L-6)-Z9-L06-ST | 2027-01-06 → 2026-09-19 A (-109d) | 2027-01-10 → 2026-10-27 A (-75d) | 0% → 100% |  |
| RHD4CZ9L06ST3201 | Installation of Base for MH 1500 mm - (RD-L-6)-Z9-L06-ST | 2027-01-11 → 2026-09-24 A (-109d) | 2027-01-14 → 2026-10-28 A (-78d) | 0% → 100% |  |
| RHD4CZ9L06ST3301 | MH Ring and C.Slab works and Backfilling works for MH 1500 mm - (RD-L-6)-Z9-L06-ST | 2027-01-16 → 2026-10-29 A (-79d) | 2027-01-19 → 2026-11-01 A (-79d) | 0% → 100% |  |
| RHD4CZ9L06ST3401 | Steel Cover for MH 1500 mm - (RD-L-6)-Z9-L06-ST | 2027-01-20 → 2027-05-11 (+111d) | 2027-01-23 → 2027-05-13 (+110d) |  |  |
| RHD4CZ9L06ST3501 | Finishing, Benching, Testing works for MH 1500 mm - (RD-L-6)-Z9-L06-ST | 2027-01-24 → 2027-05-19 (+115d) | 2027-01-27 → 2027-05-23 (+116d) |  |  |
| 9050 | **RHD4-02-002-L06-(ST)-MH Works - 2000 mm diameter** | 2027-01-04 → 2026-09-19 (-107d) | 2027-01-30 → 2027-05-25 (+115d) |  |  |
| RHD4CZ9L06ST3102 | Excavation and PC Blinding works for MH 2000 mm - (RD-L-6)-Z9-L06-ST | 2027-01-04 → 2026-09-19 A (-107d) | 2027-01-05 → 2026-09-20 A (-107d) | 0% → 100% | resources Skilled labor [7.3 h]; Unskilled Labor [7.3 h]; Equipment Opreator [11.65 h]; Excavator-Poclain [7.3 h]; Water Truck [0.76 h]; Dump Truck [3.59 h]; MH (2000mm Diameter) - ST - depth 2.51 - 3.5m [0.5 nr] → Skilled labor [7.3 h]; Unskilled Labor [7.3 h]; Equipment Opreator [11.65 h]; Excavator-Poclain [7.3 h]; Water Truck [0.8 h]; Dump Truck [3.59 h]; MH (2000mm Diameter) - ST - depth 2.51 - 3.5m [0.5 nr] |
| RHD4CZ9L06ST3202 | Installation of Base for MH 2000 mm - (RD-L-6)-Z9-L06-ST | 2027-01-06 → 2026-09-30 A (-98d) | 2027-01-07 → 2026-10-01 A (-98d) | 0% → 100% |  |
| RHD4CZ9L06ST3302 | MH Ring and C.Slab works and Backfilling works for MH 2000 mm - (RD-L-6)-Z9-L06-ST | 2027-01-09 → 2027-05-11 (+122d) | 2027-01-10 → 2027-05-12 (+122d) |  |  |
| RHD4CZ9L06ST3402 | Steel Cover for MH 2000 mm - (RD-L-6)-Z9-L06-ST | 2027-01-24 → 2027-05-19 (+115d) | 2027-01-25 → 2027-05-20 (+115d) |  |  |
| RHD4CZ9L06ST3502 | Finishing, Benching, Testing works for MH 2000 mm - (RD-L-6)-Z9-L06-ST | 2027-01-28 → 2027-05-24 (+116d) | 2027-01-30 → 2027-05-25 (+115d) |  |  |
| 9038 | **RHD4-02-002-L06-(ST)-GRP Pipes - 1000 mm diameter** |  | 2026-09-08 → 2027-01-31 (+145d) |  |  |
| RHD4CZ9L06ST1106 | Excavation works for GRP Pipe Line 1000 mm - (RD-L-6)-Z9-L06-ST | 2026-08-29 A | 2026-08-30 A | 0% → 100% |  |
| RHD4CZ9L06ST1206 | Bedding works for GRP Pipe Line 1000 mm - (RD-L-6)-Z9-L06-ST | 2026-08-31 → 2026-08-30 A (-1d) | 2026-09-01 → 2026-08-31 A (-1d) | 0% → 100% |  |
| RHD4CZ9L06ST1306 | Installing for GRP Pipe Line 1000 mm - (RD-L-6)-Z9-L06-ST | 2026-09-02 → 2026-09-01 A (-1d) | 2026-09-03 → 2026-09-02 A (-1d) | 0% → 100% |  |
| RHD4CZ9L06ST1506 | Backfilling and warning tape works for GRP Pipe Line 1000 mm - (RD-L-6)-Z9-L06-ST | 2026-09-07 A | 2026-09-08 → 2026-09-20 A (+12d) | 0% → 100% |  |
| RHD4CZ9L06ST1406 | Primary Test for GRP Pipe Line 1000 mm - (RD-L-6)-Z9-L06-ST | 2026-09-05 → 2027-01-30 (+147d) | 2026-09-06 → 2027-01-31 (+147d) |  |  |
| 9037 | **RHD4-02-002-L06-(ST)-GRP Pipes - 900 mm diameter** | 2026-11-28 → 2026-08-31 (-89d) | 2026-12-08 → 2027-05-03 (+146d) |  |  |
| RHD4CZ9L06ST1105 | Excavation works for GRP Pipe Line 900 mm - (RD-L-6)-Z9-L06-ST | 2026-11-28 → 2026-08-31 A (-89d) | 2026-11-29 → 2026-09-01 A (-89d) | 0% → 100% |  |
| RHD4CZ9L06ST1205 | Bedding works for GRP Pipe Line 900 mm - (RD-L-6)-Z9-L06-ST | 2026-11-30 → 2026-09-15 A (-76d) | 2026-12-01 → 2026-09-16 A (-76d) | 0% → 100% | resources Skilled labor [1.96 h]; Unskilled Labor [4.03 h]; Equipment Opreator [4.03 h]; Excavator-Poclain [1.96 h]; Dump Truck [1.96 h]; GRP (900mm Diameter) - ST - Depth: 1.51m - 2.5m [1.84 m] → Skilled labor [1.96 h]; Unskilled Labor [4 h]; Equipment Opreator [4 h]; Excavator-Poclain [1.96 h]; Dump Truck [1.96 h]; GRP (900mm Diameter) - ST - Depth: 1.51m - 2.5m [1.84 m] |
| RHD4CZ9L06ST1305 | Installing for GRP Pipe Line 900 mm - (RD-L-6)-Z9-L06-ST | 2026-12-02 → 2026-09-16 A (-77d) | 2026-12-03 → 2026-09-17 A (-77d) | 0% → 100% |  |
| RHD4CZ9L06ST1505 | Backfilling and warning tape works for GRP Pipe Line 900 mm - (RD-L-6)-Z9-L06-ST | 2026-12-07 → 2026-09-17 A (-81d) | 2026-12-08 → 2026-09-19 A (-80d) | 0% → 100% | resources Skilled labor [1.96 h]; Unskilled Labor [4.03 h]; Equipment Opreator [4.03 h]; Excavator-Poclain [1.96 h]; Dump Truck [1.96 h]; GRP (900mm Diameter) - ST - Depth: 1.51m - 2.5m [7.37 m] → Skilled labor [1.96 h]; Unskilled Labor [4 h]; Equipment Opreator [4 h]; Excavator-Poclain [1.96 h]; Dump Truck [1.96 h]; GRP (900mm Diameter) - ST - Depth: 1.51m - 2.5m [7.37 m] |
| RHD4CZ9L06ST1405 | Primary Test for GRP Pipe Line 900 mm - (RD-L-6)-Z9-L06-ST | 2026-12-05 → 2027-05-02 (+148d) | 2026-12-06 → 2027-05-03 (+148d) |  |  |
| 9036 | **RHD4-02-002-L06-(ST)-GRP Pipes - 800 mm diameter** | 2026-11-28 → 2026-08-29 (-91d) | 2026-12-08 → 2027-05-03 (+146d) |  |  |
| RHD4CZ9L06ST1104 | Excavation works for GRP Pipe Line 800 mm - (RD-L-6)-Z9-L06-ST | 2026-11-28 → 2026-08-29 A (-91d) | 2026-11-29 → 2026-08-30 A (-91d) | 0% → 100% |  |
| RHD4CZ9L06ST1204 | Bedding works for GRP Pipe Line 800 mm - (RD-L-6)-Z9-L06-ST | 2026-11-30 → 2026-08-30 A (-92d) | 2026-12-01 → 2026-08-31 A (-92d) | 0% → 100% |  |
| RHD4CZ9L06ST1304 | Installing for GRP Pipe Line 800 mm - (RD-L-6)-Z9-L06-ST | 2026-12-02 → 2026-09-01 A (-92d) | 2026-12-03 → 2026-09-19 A (-75d) | 0% → 100% |  |
| RHD4CZ9L06ST1504 | Backfilling and warning tape works for GRP Pipe Line 800 mm - (RD-L-6)-Z9-L06-ST | 2026-12-07 → 2026-09-19 A (-79d) | 2026-12-08 → 2026-09-20 A (-79d) | 0% → 100% |  |
| RHD4CZ9L06ST1404 | Primary Test for GRP Pipe Line 800 mm - (RD-L-6)-Z9-L06-ST | 2026-12-05 → 2027-05-02 (+148d) | 2026-12-06 → 2027-05-03 (+148d) |  |  |
| 9035 | **RHD4-02-002-L06-(ST)-GRP Pipes - 700 mm diameter** | 2026-12-09 → 2026-08-31 (-100d) | 2026-12-20 → 2027-05-05 (+136d) |  |  |
| RHD4CZ9L06ST1103 | Excavation works for GRP Pipe Line 700 mm - (RD-L-6)-Z9-L06-ST | 2026-12-09 → 2026-08-31 A (-100d) | 2026-12-10 → 2026-09-01 A (-100d) | 0% → 100% | resources Skilled labor [3.81 h]; Unskilled Labor [3.81 h]; Equipment Opreator [4.57 h]; Excavator-Poclain [3.81 h]; Dump Truck [0.76 h]; GRP (700mm Diameter) - ST - Depth: 1.51m - 2.5m [10.39 m] → Skilled labor [3.81 h]; Unskilled Labor [3.81 h]; Equipment Opreator [4.57 h]; Excavator-Poclain [3.81 h]; Dump Truck [0.8 h]; GRP (700mm Diameter) - ST - Depth: 1.51m - 2.5m [10.39 m] |
| RHD4CZ9L06ST1203 | Bedding works for GRP Pipe Line 700 mm - (RD-L-6)-Z9-L06-ST | 2026-12-12 → 2026-09-19 A (-84d) | 2026-12-13 → 2026-09-20 A (-84d) | 0% → 100% |  |
| RHD4CZ9L06ST1303 | Installing for GRP Pipe Line 700 mm - (RD-L-6)-Z9-L06-ST | 2026-12-14 → 2026-09-20 A (-85d) | 2026-12-15 → 2026-09-21 A (-85d) | 0% → 100% |  |
| RHD4CZ9L06ST1503 | Backfilling and warning tape works for GRP Pipe Line 700 mm - (RD-L-6)-Z9-L06-ST | 2026-12-19 → 2026-09-21 A (-89d) | 2026-12-20 → 2026-09-22 A (-89d) | 0% → 100% |  |
| RHD4CZ9L06ST1403 | Primary Test for GRP Pipe Line 700 mm - (RD-L-6)-Z9-L06-ST | 2026-12-16 → 2027-05-04 (+139d) | 2026-12-17 → 2027-05-05 (+139d) |  |  |
| 9032 | **RHD4-02-002-L06-(ST)-GRP Pipes - 400 mm diameter** | 2026-12-21 → 2026-08-29 (-114d) | 2026-12-31 → 2027-05-08 (+128d) |  |  |
| RHD4CZ9L06ST1100 | Excavation works for GRP Pipe Line 400 mm - (RD-L-6)-Z9-L06-ST | 2026-12-21 → 2026-08-29 A (-114d) | 2026-12-22 → 2026-08-30 A (-114d) | 0% → 100% | resources Skilled labor [3.7 h]; Unskilled Labor [3.7 h]; Equipment Opreator [4.36 h]; Excavator-Poclain [3.7 h]; Dump Truck [0.76 h]; GRP (400mm Diameter) - ST - Depth: 1.51m - 2.5 m [17.55 m] → Skilled labor [3.7 h]; Unskilled Labor [3.7 h]; Equipment Opreator [4.36 h]; Excavator-Poclain [3.7 h]; Dump Truck [0.8 h]; GRP (400mm Diameter) - ST - Depth: 1.51m - 2.5 m [17.55 m] |
| RHD4CZ9L06ST1200 | Bedding works for GRP Pipe Line 400 mm - (RD-L-6)-Z9-L06-ST | 2026-12-23 → 2026-09-19 A (-95d) | 2026-12-24 → 2026-09-20 A (-95d) | 0% → 100% |  |
| RHD4CZ9L06ST1300 | Installing for GRP Pipe Line 400 mm - (RD-L-6)-Z9-L06-ST | 2026-12-26 → 2026-09-20 A (-97d) | 2026-12-27 → 2026-09-21 A (-97d) | 0% → 100% |  |
| RHD4CZ9L06ST1500 | Backfilling and warning tape works for GRP Pipe Line 400 mm - (RD-L-6)-Z9-L06-ST | 2026-12-30 → 2026-09-22 A (-99d) | 2026-12-31 → 2026-09-24 A (-98d) | 0% → 100% |  |
| RHD4CZ9L06ST1400 | Primary Test for GRP Pipe Line 400 mm - (RD-L-6)-Z9-L06-ST | 2026-12-28 → 2027-05-06 (+129d) | 2026-12-29 → 2027-05-08 (+130d) |  |  |
| 9046 | **RHD4-02-002-L06-(ST)-UPVC Pipes - 300 mm diameter** | 2027-01-02 → 2026-09-19 (-105d) | 2027-01-13 → 2027-05-25 (+132d) |  |  |
| RHD4CZ9L06ST2100 | Excavation works for UPVC Pipe Line 300 mm - (RD-L-6)-Z9-L06-ST | 2027-01-02 → 2026-09-19 A (-105d) | 2027-01-03 → 2027-05-10 (+127d) | 0% → 24% | resources Skilled labor [20.04 h]; Unskilled Labor [20.04 h]; Equipment Opreator [24.07 h]; Excavator-Poclain [20.04 h]; Dump Truck [4.03 h]; UPVC (300mm Diameter) - ST - Depth less than 1.5 [45.24 m]; UPVC (300mm Diameter) - ST - Depth: 1.51m - 2.5m → Skilled labor [20 h]; Unskilled Labor [20 h]; Equipment Opreator [24.07 h]; Excavator-Poclain [20 h]; Dump Truck [4 h]; UPVC (300mm Diameter) - ST - Depth less than 1.5 [45.24 m]; UPVC (300mm Diameter) - ST - Depth: 1.51m - 2.5m |
| RHD4CZ9L06ST2200 | Bedding works for UPVC Pipe Line 300 mm - (RD-L-6)-Z9-L06-ST | 2027-01-04 → 2026-09-21 A (-105d) | 2027-01-05 → 2027-05-12 (+127d) | 0% → 18% |  |
| RHD4CZ9L06ST2300 | Installing for UPVC Pipe Line 300 mm - (RD-L-6)-Z9-L06-ST | 2027-01-06 → 2026-09-22 A (-106d) | 2027-01-07 → 2027-05-19 (+132d) | 0% → 9% | resources Unskilled Labor [40.08 h]; Plumber [20.04 h]; UPVC (300mm Diameter) - ST - Depth less than 1.5 [203.58 m]; UPVC (300mm Diameter) - ST - Depth: 1.51m - 2.5m → Unskilled Labor [40.08 h]; Plumber [20 h]; UPVC (300mm Diameter) - ST - Depth less than 1.5 [203.58 m]; UPVC (300mm Diameter) - ST - Depth: 1.51m - 2.5m |
| RHD4CZ9L06ST2500 | Backfilling and warning tape works for UPVC Pipe Line 300 mm - (RD-L-6)-Z9-L06-ST | 2027-01-11 → 2026-09-23 A (-110d) | 2027-01-13 → 2027-05-25 (+132d) | 0% → 9% |  |
| RHD4CZ9L06ST2400 | Primary Test for UPVC Pipe Line 300 mm - (RD-L-6)-Z9-L06-ST | 2027-01-09 → 2027-05-20 (+131d) | 2027-01-10 → 2027-05-22 (+132d) |  |  |
| 9054 | **RHD4-02-002-L06-(ST)-Concrete Encasement** | 2027-01-06 → 2027-05-13 (+127d) | 2027-01-07 → 2027-05-19 (+132d) |  |  |
| RHD4CZ9L06ST6100 | Pipe Encasement for Storm Pipelines - (RD-L-6)-Z9-L06-ST | 2027-01-06 → 2027-05-13 (+127d) | 2027-01-07 → 2027-05-19 (+132d) |  |  |
| 9055 | **RHD4-02-002-Z9-L06-Catch Basin - ST** | 2027-01-20 → 2026-09-19 (-123d) | 2027-02-08 → 2027-06-08 (+120d) |  |  |
| 9056 | **RHD4-02-002-L06-(ST)-Single Catch Basin Works** | 2027-01-20 → 2026-09-19 (-123d) | 2027-02-08 → 2027-06-08 (+120d) |  |  |
| RHD4CZ9L06ST7100 | Excavation works for Single Catch Basin - (RD-L-6)-Z9-L06-ST | 2027-01-20 → 2026-09-19 A (-123d) | 2027-01-23 → 2027-05-23 (+120d) | 0% → 54% | resources Skilled labor [26.14 h]; Unskilled Labor [52.27 h]; Equipment Opreator [39.21 h]; Excavator-Poclain [26.14 h]; Dump Truck [13.07 h]; Single Catch basin - ST [6 nr] → Skilled labor [26.14 h]; Unskilled Labor [52.27 h]; Equipment Opreator [39.2 h]; Excavator-Poclain [26.14 h]; Dump Truck [13.07 h]; Single Catch basin - ST [6 nr] |
| RHD4CZ9L06ST7200 | PC Blinding, Installation and Pipe connection for Single Catch Basin - (RD-L-6)-Z9-L06-ST | 2027-01-24 → 2026-09-20 A (-126d) | 2027-01-26 → 2027-05-26 (+120d) | 0% → 54% |  |
| RHD4CZ9L06ST7300 | Rings & C.Slab & Final Backfill for Single Catch Basin - (RD-L-6)-Z9-L06-ST | 2027-01-27 → 2026-09-22 A (-127d) | 2027-01-30 → 2027-05-30 (+120d) | 0% → 54% | resources Skilled labor [32.67 h]; Unskilled Labor [65.34 h]; Equipment Opreator [39.21 h]; Boom Truck [6.53 h]; Bobcat [32.67 h]; Single Catch basin - ST [8.4 nr] → Skilled labor [32.67 h]; Unskilled Labor [65.34 h]; Equipment Opreator [39.2 h]; Boom Truck [6.53 h]; Bobcat [32.67 h]; Single Catch basin - ST [8.4 nr] |
| RHD4CZ9L06ST7400 | Steel Cover for Single Catch Basin - (RD-L-6)-Z9-L06-ST | 2027-01-31 → 2027-05-31 (+120d) | 2027-02-02 → 2027-06-02 (+120d) |  |  |
| RHD4CZ9L06ST7500 | Finishing and Insulation works for Single Catch Basin - (RD-L-6)-Z9-L06-ST | 2027-02-03 → 2027-06-03 (+120d) | 2027-02-08 → 2027-06-08 (+120d) |  |  |
| 9080 | **RHD4-02-002-Z9-L06-Sewage Network - SW** | 2027-01-14 → 2026-09-15 (-121d) | 2027-02-14 → 2027-06-12 (+118d) |  |  |
| 9090 | **RHD4-02-002-L06-(SW)-MH Works - 1200 mm diameter** | 2027-01-18 → 2026-09-20 (-120d) | 2027-02-14 → 2027-06-12 (+118d) |  |  |
| RHD4CZ9L06SW3100 | Excavation and PC Blinding works for MH 1200 mm - (RD-L-6)-Z9-L06-SW | 2027-01-18 → 2026-09-20 A (-120d) | 2027-01-20 → 2026-10-20 A (-92d) | 0% → 100% |  |
| RHD4CZ9L06SW3200 | Installation of Base for MH 1200 mm - (RD-L-6)-Z9-L06-SW | 2027-01-21 → 2026-10-21 A (-92d) | 2027-01-27 → 2026-10-27 A (-92d) | 0% → 100% | resources Skilled labor [59.9 h]; Unskilled Labor [59.9 h]; Equipment Opreator [23.96 h]; Boom Truck [11.98 h]; Concrete Mixer Truck [11.98 h]; MH (1200mm Diameter) - SW - depth 0 - 1.5m [0.75 nr]; MH (1200mm Diameter) - SW - depth 2.51 - 3.5m [1 nr] → Skilled labor [59.9 h]; Unskilled Labor [59.9 h]; Equipment Opreator [23.96 h]; Boom Truck [12 h]; Concrete Mixer Truck [12 h]; MH (1200mm Diameter) - SW - depth 0 - 1.5m [0.75 nr]; MH (1200mm Diameter) - SW - depth 2.51 - 3.5m [1 nr] |
| RHD4CZ9L06SW3300 | MH Ring and C.Slab works and Backfilling works for MH 1200 mm - (RD-L-6)-Z9-L06-SW | 2027-01-28 → 2027-05-26 (+118d) | 2027-02-03 → 2027-06-01 (+118d) |  |  |
| RHD4CZ9L06SW3400 | Steel Cover for MH 1200 mm - (RD-L-6)-Z9-L06-SW | 2027-02-04 → 2027-06-02 (+118d) | 2027-02-07 → 2027-06-05 (+118d) |  |  |
| RHD4CZ9L06SW3500 | Finishing, Benching, Testing works for MH 1200 mm - (RD-L-6)-Z9-L06-SW | 2027-02-08 → 2027-06-06 (+118d) | 2027-02-14 → 2027-06-12 (+118d) |  | resources Skilled labor [59.9 h]; Unskilled Labor [119.79 h]; Plumber [59.9 h]; Equipment Opreator [11.98 h]; Water Truck [11.98 h]; MH (1200mm Diameter) - SW - depth 0 - 1.5m [0.3 nr]; MH (1200mm Diameter) - SW - depth 2.51 - 3.5m [0.4 nr] → Skilled labor [59.9 h]; Unskilled Labor [119.79 h]; Plumber [59.9 h]; Equipment Opreator [12 h]; Water Truck [12 h]; MH (1200mm Diameter) - SW - depth 0 - 1.5m [0.3 nr]; MH (1200mm Diameter) - SW - depth 2.51 - 3.5m [0.4 nr] |
| 957 | **RHD4-02-002-L06-(SW)-MH Works - 1200 mm diameter with Back drop** | 2027-01-18 → 2026-09-20 (-120d) | 2027-02-01 → 2027-06-03 (+122d) |  |  |

| ID | Task | Start | Finish | Complete | Other |
| --- | --- | --- | --- | --- | --- |
| RHD4CZ9L06SW3101 | Excavation and PC Blinding works for MH 1200 mm - (RD-L-6)-Z9-L06-SW | 2027-01-18 → 2026-09-20 A (-120d) | 2027-01-19 → 2026-10-20 A (-91d) | 0% → 100% |  |
| RHD4CZ9L06SW3201 | Installation of Base for MH 1200 mm - (RD-L-6)-Z9-L06-SW | 2027-01-20 → 2026-10-21 A (-91d) | 2027-01-23 → 2026-10-24 A (-91d) | 0% → 100% | resources Skilled labor [27.23 h]; Unskilled Labor [27.23 h]; Equipment Opreator [10.89 h]; Boom Truck [5.45 h]; Concrete Mixer Truck [5.45 h]; MH (1200mm Diameter) - SW - depth 2.51- 3.5 m with back drop [0.75 nr]; MH (1200mm Diameter) - SW - depth 3.51 -4.5 m with back drop [0.25 nr] → Skilled labor [27.2 h]; Unskilled Labor [27.2 h]; Equipment Opreator [10.89 h]; Boom Truck [5.45 h]; Concrete Mixer Truck [5.45 h]; MH (1200mm Diameter) - SW - depth 2.51- 3.5 m with back drop [0.75 nr]; MH (1200mm Diameter) - SW - depth 3.51 -4.5 m with back drop [0.25 nr] |
| RHD4CZ9L06SW3301 | MH Ring and C.Slab works and Backfilling works for MH 1200 mm - (RD-L-6)-Z9-L06-SW | 2027-01-24 → 2027-05-26 (+122d) | 2027-01-26 → 2027-05-29 (+123d) |  | resources Skilled labor [27.23 h]; Unskilled Labor [27.23 h]; Equipment Opreator [19.06 h]; Boom Truck [10.89 h]; Concrete Mixer Truck [8.17 h]; MH (1200mm Diameter) - SW - depth 2.51- 3.5 m with back drop [1.05 nr]; MH (1200mm Diameter) - SW - depth 3.51 -4.5 m with back drop [0.35 nr] → Skilled labor [27.2 h]; Unskilled Labor [27.2 h]; Equipment Opreator [19.06 h]; Boom Truck [10.89 h]; Concrete Mixer Truck [8.17 h]; MH (1200mm Diameter) - SW - depth 2.51- 3.5 m with back drop [1.05 nr]; MH (1200mm Diameter) - SW - depth 3.51 -4.5 m with back drop [0.35 nr] |
| RHD4CZ9L06SW3401 | Steel Cover for MH 1200 mm - (RD-L-6)-Z9-L06-SW | 2027-01-27 → 2027-05-30 (+123d) | 2027-01-28 → 2027-05-31 (+123d) |  |  |
| RHD4CZ9L06SW3501 | Finishing, Benching, Testing works for MH 1200 mm - (RD-L-6)-Z9-L06-SW | 2027-01-30 → 2027-06-01 (+122d) | 2027-02-01 → 2027-06-03 (+122d) |  | resources Skilled labor [27.23 h]; Unskilled Labor [54.45 h]; Plumber [27.23 h]; Equipment Opreator [5.45 h]; Water Truck [5.45 h]; MH (1200mm Diameter) - SW - depth 2.51- 3.5 m with back drop [0.3 nr]; MH (1200mm Diameter) - SW - depth 3.51 -4.5 m with back drop [0.1 nr] → Skilled labor [27.2 h]; Unskilled Labor [54.45 h]; Plumber [27.2 h]; Equipment Opreator [5.45 h]; Water Truck [5.45 h]; MH (1200mm Diameter) - SW - depth 2.51- 3.5 m with back drop [0.3 nr]; MH (1200mm Diameter) - SW - depth 3.51 -4.5 m with back drop [0.1 nr] |
| 9086 | **RHD4-02-002-L06-(SW)-UPVC Pipes - 200 mm diameter** | 2027-01-14 → 2026-09-15 (-121d) | 2027-02-01 → 2027-05-29 (+117d) |  |  |
| RHD4CZ9L06SW2100 | Excavation works for UPVC Pipe Line 200 mm - (RD-L-6)-Z9-L06-SW | 2027-01-14 → 2026-09-15 A (-121d) | 2027-01-17 → 2026-09-22 A (-117d) | 0% → 100% | resources Skilled labor [31.36 h]; Unskilled Labor [31.36 h]; Equipment Opreator [37.57 h]; Excavator-Poclain [31.36 h]; Dump Truck [6.32 h]; UPVC (200mm Diameter) - SW - Depth: less than 1.5m [8.78 m]; UPVC (200mm Diameter) - SW - Depth: 1.51m - 2.5m [54.37 m]; UPVC (200mm Diameter) - SW - Depth: 2.51m - 3.5m [7.45 m]; UPVC (200mm Diameter) - SW - Depth: 3.51m - 4.5m → Skilled labor [31.36 h]; Unskilled Labor [31.36 h]; Equipment Opreator [37.6 h]; Excavator-Poclain [31.36 h]; Dump Truck [6.32 h]; UPVC (200mm Diameter) - SW - Depth: less than 1.5m [8.78 m]; UPVC (200mm Diameter) - SW - Depth: 1.51m - 2.5m [54.37 m]; UPVC (200mm Diameter) - SW - Depth: 2.51m - 3.5m [7.45 m]; UPVC (200mm Diameter) - SW - Depth: 3.51m - 4.5m |
| RHD4CZ9L06SW2200 | Bedding works for UPVC Pipe Line 200 mm - (RD-L-6)-Z9-L06-SW | 2027-01-18 → 2026-09-23 A (-117d) | 2027-01-20 → 2026-09-24 A (-118d) | 0% → 100% |  |
| RHD4CZ9L06SW2300 | Installing for UPVC Pipe Line 200 mm - (RD-L-6)-Z9-L06-SW | 2027-01-21 → 2026-10-27 A (-86d) | 2027-01-25 → 2026-10-31 A (-86d) | 0% → 100% |  |
| RHD4CZ9L06SW2500 | Backfilling and warning tape works for UPVC Pipe Line 200 mm - (RD-L-6)-Z9-L06-SW | 2027-01-30 → 2026-10-31 A (-91d) | 2027-02-01 → 2026-11-01 A (-92d) | 0% → 100% |  |
| RHD4CZ9L06SW2400 | Primary Test for UPVC Pipe Line 200 mm - (RD-L-6)-Z9-L06-SW | 2027-01-26 → 2027-05-26 (+120d) | 2027-01-28 → 2027-05-29 (+121d) |  |  |
| 9117 | **RHD4-02-002-Z9-L06-Potable Network - PT** | 2027-02-02 → 2027-05-30 (+117d) | 2027-03-01 → 2027-06-24 (+115d) |  |  |
| 9118 | **RHD4-02-002-L06-(PT)-HDPE Pipes - 110 mm diameter** | 2027-02-04 → 2027-06-01 (+117d) | 2027-02-17 → 2027-06-14 (+117d) |  |  |
| RHD4CZ9L06PT1100 | Excavation works for HDPE Pipline 110 mm - (RD-L-6)-Z9-L06-PT | 2027-02-04 → 2027-06-01 (+117d) | 2027-02-06 → 2027-06-02 (+116d) |  |  |
| RHD4CZ9L06PT1200 | Bedding works for HDPE Pipline 110 mm - (RD-L-6)-Z9-L06-PT | 2027-02-07 → 2027-06-03 (+116d) | 2027-02-08 → 2027-06-05 (+117d) |  |  |
| RHD4CZ9L06PT1300 | Installing for HDPE Pipline 110 mm - (RD-L-6)-Z9-L06-PT | 2027-02-10 → 2027-06-07 (+117d) | 2027-02-11 → 2027-06-08 (+117d) |  |  |
| RHD4CZ9L06PT1400 | Primary Test for HDPE Pipline 110 mm - (RD-L-6)-Z9-L06-PT | 2027-02-13 → 2027-06-09 (+116d) | 2027-02-14 → 2027-06-10 (+116d) |  |  |
| RHD4CZ9L06PT1500 | Backfilling and warning tape works for HDPE Pipline 110 mm - (RD-L-6)-Z9-L06-PT | 2027-02-16 → 2027-06-13 (+117d) | 2027-02-17 → 2027-06-14 (+117d) |  |  |
| 9119 | **RHD4-02-002-L06-(PT)-HDPE Pipes - 160 mm diameter** | 2027-02-02 → 2027-05-30 (+117d) | 2027-02-15 → 2027-06-12 (+117d) |  |  |
| RHD4CZ9L06PT1101 | Excavation works for HDPE Pipline 160 mm - (RD-L-6)-Z9-L06-PT | 2027-02-02 → 2027-05-30 (+117d) | 2027-02-03 → 2027-05-31 (+117d) |  |  |
| RHD4CZ9L06PT1201 | Bedding works for HDPE Pipline 160 mm - (RD-L-6)-Z9-L06-PT | 2027-02-04 → 2027-06-01 (+117d) | 2027-02-06 → 2027-06-02 (+116d) |  |  |
| RHD4CZ9L06PT1301 | Installing for HDPE Pipline 160 mm - (RD-L-6)-Z9-L06-PT | 2027-02-07 → 2027-06-03 (+116d) | 2027-02-09 → 2027-06-06 (+117d) |  |  |
| RHD4CZ9L06PT1401 | Primary Test for HDPE Pipline 160 mm - (RD-L-6)-Z9-L06-PT | 2027-02-10 → 2027-06-07 (+117d) | 2027-02-11 → 2027-06-08 (+117d) |  |  |
| RHD4CZ9L06PT1501 | Backfilling and warning tape works for HDPE Pipline 160 mm - (RD-L-6)-Z9-L06-PT | 2027-02-13 → 2027-06-09 (+116d) | 2027-02-15 → 2027-06-12 (+117d) |  | resources Skilled labor [23.96 h]; Unskilled Labor [48.03 h]; Equipment Opreator [48.03 h]; Excavator-Poclain [23.96 h]; Dump Truck [23.96 h]; HDPE (160mm Diameter) - PT - Depth: less than 1.5m [88.14 m]; HDPE (160mm Diameter) - PT - Depth: 1.51m - 2.5m → Skilled labor [23.96 h]; Unskilled Labor [48 h]; Equipment Opreator [48 h]; Excavator-Poclain [23.96 h]; Dump Truck [23.96 h]; HDPE (160mm Diameter) - PT - Depth: less than 1.5m [88.14 m]; HDPE (160mm Diameter) - PT - Depth: 1.51m - 2.5m |
| 9123 | **RHD4-02-002-L06-(PT)-Gate Valves (Direct Buried)** | 2027-02-10 → 2027-06-07 (+117d) | 2027-02-17 → 2027-06-14 (+117d) |  |  |
| RHD4CZ9L06PT3100 | Installation for Direct Buried Gate Valves - (RD-L-6)-Z9-L06-PT | 2027-02-10 → 2027-06-07 (+117d) | 2027-02-11 → 2027-06-08 (+117d) |  |  |
| RHD4CZ9L06PT3200 | Stem and Service box for Direct Buried Gate Valves - (RD-L-6)-Z9-L06-PT | 2027-02-16 → 2027-06-13 (+117d) | 2027-02-17 → 2027-06-14 (+117d) |  |  |
| 9128 | **RHD4-02-002-L06-(PT)-Air Valve Chambers** | 2027-02-10 → 2027-06-07 (+117d) | 2027-02-18 → 2027-06-15 (+117d) |  |  |
| RHD4CZ9L06PT2102 | Excavation and Bedding for Air Valve Chambers for Potable Water Network - (RD-L-6)-Z9-L06-PT | 2027-02-10 → 2027-06-07 (+117d) | 2027-02-11 → 2027-06-08 (+117d) |  |  |
| RHD4CZ9L06PT2202 | PC works for Air Valve Chambers for Potable Water Network - (RD-L-6)-Z9-L06-PT | 2027-02-13 → 2027-06-09 (+116d) | 2027-02-14 → 2027-06-10 (+116d) |  |  |
| RHD4CZ9L06PT2302 | Installation for Air Valve Chambers for Potable Water Network - (RD-L-6)-Z9-L06-PT | 2027-02-15 → 2027-06-12 (+117d) | 2027-02-16 → 2027-06-13 (+117d) |  |  |
| RHD4CZ9L06PT2402 | Backfilling works for Air Valve Chambers for Potable Water Network - (RD-L-6)-Z9-L06-PT | 2027-02-17 → 2027-06-14 (+117d) | 2027-02-18 → 2027-06-15 (+117d) |  |  |
| 9129 | **RHD4-02-002-L06-(PT)-Air Valves** | 2027-02-04 → 2027-06-01 (+117d) | 2027-02-08 → 2027-06-05 (+117d) |  |  |
| RHD4CZ9L06PT3103 | Installation for Air Valves for Potable Water Network - (RD-L-6)-Z9-L06-PT | 2027-02-04 → 2027-06-01 (+117d) | 2027-02-06 → 2027-06-02 (+116d) |  |  |
| RHD4CZ9L06PT3203 | Stem and Service box for Air Valves for Potable Water Network - (RD-L-6)-Z9-L06-PT | 2027-02-07 → 2027-06-03 (+116d) | 2027-02-08 → 2027-06-05 (+117d) |  |  |
| 9130 | **RHD4-02-002-L06-(PT)-Fire Hydrant** | 2027-02-16 → 2027-06-13 (+117d) | 2027-03-01 → 2027-06-24 (+115d) |  |  |
| RHD4CZ9L06PT4100 | Excavation and Bedding and Pipe Installation for Fire Hydrant - (RD-L-6)-Z9-L06-PT | 2027-02-16 → 2027-06-13 (+117d) | 2027-02-18 → 2027-06-15 (+117d) |  | resources Skilled labor [27.23 h]; Unskilled Labor [27.23 h]; Plumber [27.23 h]; Equipment Opreator [13.61 h]; Excavator-Poclain [13.61 h]; 3-outlet fire hydrant (2 x 2.5 inch and 1 x 4.5 inch) in the form of a separate dry vacuum cylinder [0.5 nr] → Skilled labor [27.2 h]; Unskilled Labor [27.2 h]; Plumber [27.2 h]; Equipment Opreator [13.6 h]; Excavator-Poclain [13.6 h]; 3-outlet fire hydrant (2 x 2.5 inch and 1 x 4.5 inch) in the form of a separate dry vacuum cylinder [0.5 nr] |
| RHD4CZ9L06PT4200 | Valve Installation for Fire Hydrant - (RD-L-6)-Z9-L06-PT | 2027-02-20 → 2027-06-16 (+116d) | 2027-02-21 → 2027-06-17 (+116d) |  |  |
| RHD4CZ9L06PT4300 | Stem for Fire Hydrant - (RD-L-6)-Z9-L06-PT | 2027-02-23 → 2027-06-19 (+116d) | 2027-02-24 → 2027-06-20 (+116d) |  |  |
| RHD4CZ9L06PT4400 | Fire Installation for Fire Hydrant - (RD-L-6)-Z9-L06-PT | 2027-02-25 → 2027-06-21 (+116d) | 2027-02-27 → 2027-06-22 (+115d) |  |  |
| RHD4CZ9L06PT4500 | Protection Barriers for Fire Hydrant - (RD-L-6)-Z9-L06-PT | 2027-02-28 → 2027-06-23 (+115d) | 2027-03-01 → 2027-06-24 (+115d) |  |  |
| 9132 | **RHD4-02-002-Z9-L06-Irrigation Network - IRR** | 2027-02-20 → 2027-06-16 (+116d) | 2027-03-08 → 2027-07-01 (+115d) |  |  |
| 9133 | **RHD4-02-002-L06-(IRR)-HDPE Pipes - 160 mm diameter** | 2027-02-20 → 2027-06-16 (+116d) | 2027-03-08 → 2027-07-01 (+115d) |  |  |
| RHD4CZ9L06IRR1100 | Excavation works for HDPE Pipline 160 mm - (RD-L-6)-Z9-L06-IRR | 2027-02-20 → 2027-06-16 (+116d) | 2027-02-23 → 2027-06-19 (+116d) |  | resources Skilled labor [32.24 h]; Unskilled Labor [32.24 h]; Equipment Opreator [38.77 h]; Excavator-Poclain [32.24 h]; Dump Truck [6.43 h]; HDPE (160mm Diameter) - TSE - Depth: less than 1.5m [44.45 m] → Skilled labor [32.24 h]; Unskilled Labor [32.24 h]; Equipment Opreator [38.77 h]; Excavator-Poclain [32.24 h]; Dump Truck [6.4 h]; HDPE (160mm Diameter) - TSE - Depth: less than 1.5m [44.45 m] |
| RHD4CZ9L06IRR1200 | Bedding works for HDPE Pipline 160 mm - (RD-L-6)-Z9-L06-IRR | 2027-02-24 → 2027-06-20 (+116d) | 2027-02-27 → 2027-06-22 (+115d) |  |  |
| RHD4CZ9L06IRR1300 | Installing for HDPE Pipline 160 mm - (RD-L-6)-Z9-L06-IRR | 2027-02-28 → 2027-06-23 (+115d) | 2027-03-02 → 2027-06-26 (+116d) |  |  |
| RHD4CZ9L06IRR1400 | Primary Test for HDPE Pipline 160 mm - (RD-L-6)-Z9-L06-IRR | 2027-03-03 → 2027-06-27 (+116d) | 2027-03-04 → 2027-06-28 (+116d) |  |  |
| RHD4CZ9L06IRR1500 | Backfilling and warning tape works for HDPE Pipline 160 mm - (RD-L-6)-Z9-L06-IRR | 2027-03-06 → 2027-06-29 (+115d) | 2027-03-08 → 2027-07-01 (+115d) |  |  |
| 9141 | **RHD4-02-002-L06-(IRR)-Gate Valves (Direct Buried)** | 2027-03-01 → 2027-06-24 (+115d) | 2027-03-04 → 2027-06-28 (+116d) |  |  |
| RHD4CZ9L06IRR3100 | Installation for Direct Buried Gate Valves - (RD-L-6)-Z9-L06-IRR | 2027-03-01 → 2027-06-24 (+115d) | 2027-03-02 → 2027-06-26 (+116d) |  |  |
| RHD4CZ9L06IRR3200 | Stem and Service box for Direct Buried Gate Valves - (RD-L-6)-Z9-L06-IRR | 2027-03-03 → 2027-06-27 (+116d) | 2027-03-04 → 2027-06-28 (+116d) |  |  |
| 9166 | **RHD4-02-002-Z9-L06-Medium Voltage Network - MV** | 2026-10-01 → 2027-03-07 (+157d) | 2026-10-29 → 2027-04-07 (+160d) |  |  |
| 9167 | **RHD4-02-002-L06-(MV)-Medium Voltage cable trench** | 2026-10-01 → 2027-03-07 (+157d) | 2026-10-29 → 2027-04-07 (+160d) |  |  |
| RHD4CZ9L06MV1100 | Excavation for Medium Voltage Trench - (RD-L-6)-Z9-L06-MV | 2026-10-01 → 2027-03-07 (+157d) | 2026-10-06 → 2027-03-15 (+160d) |  |  |
| RHD4CZ9L06MV1200 | Trench Backfilling for Medium Voltage Network - (RD-L-6)-Z9-L06-MV | 2026-10-25 → 2027-04-03 (+160d) | 2026-10-29 → 2027-04-07 (+160d) |  |  |
| 9168 | **RHD4-02-002-L06-(MV)-Medium Voltage duct banks** | 2026-10-01 → 2027-03-07 (+157d) | 2026-10-10 → 2027-03-18 (+159d) |  |  |
| RHD4CZ9L06MV2100 | Excavation of Duct Banks for Medium Voltage Network - (RD-L-6)-Z9-L06-MV | 2026-10-01 → 2027-03-07 (+157d) | 2026-10-03 → 2027-03-08 (+156d) |  |  |
| RHD4CZ9L06MV2200 | Installation of Duct Banks for Medium Voltage Network - (RD-L-6)-Z9-L06-MV | 2026-10-04 → 2027-03-13 (+160d) | 2026-10-05 → 2027-03-14 (+160d) |  | resources Unskilled Labor [17.64 h]; Equipment Opreator [35.18 h]; Excavator-Poclain [17.64 h]; Dump Truck [17.64 h]; Duct bank for MV cables UPVC (2xø150mm) [1.62 m] → Unskilled Labor [17.64 h]; Equipment Opreator [35.2 h]; Excavator-Poclain [17.64 h]; Dump Truck [17.64 h]; Duct bank for MV cables UPVC (2xø150mm) [1.62 m] |
| RHD4CZ9L06MV2300 | Pouring of Duct Banks for Medium Voltage Network - (RD-L-6)-Z9-L06-MV | 2026-10-06 → 2027-03-15 (+160d) | 2026-10-07 → 2027-03-16 (+160d) |  |  |
| RHD4CZ9L06MV2400 | Backfilling of Duct Banks for Medium Voltage Network - (RD-L-6)-Z9-L06-MV | 2026-10-08 → 2027-03-17 (+160d) | 2026-10-10 → 2027-03-18 (+159d) |  | resources Unskilled Labor [8.82 h]; Equipment Opreator [17.64 h]; Excavator-Poclain [8.82 h]; Dump Truck [8.82 h]; Duct bank for MV cables UPVC (2xø150mm) [2.42 m] → Unskilled Labor [8.8 h]; Equipment Opreator [17.64 h]; Excavator-Poclain [8.8 h]; Dump Truck [8.8 h]; Duct bank for MV cables UPVC (2xø150mm) [2.42 m] |
| 9169 | **RHD4-02-002-L06-(MV)-Medium Voltage cables 3Cx 500 mm²** | 2026-10-07 → 2027-03-16 (+160d) | 2026-10-19 → 2027-03-28 (+160d) |  |  |
| RHD4CZ9L06MV3100 | Installation of Medium Voltage Cables 3Cx 500 mm² - (RD-L-6)-Z9-L06-MV | 2026-10-07 → 2027-03-16 (+160d) | 2026-10-12 → 2027-03-21 (+160d) |  |  |
| RHD4CZ9L06MV3200 | Joints Installation of Medium Voltage Cables 3Cx 500 mm² - (RD-L-6)-Z9-L06-MV | 2026-10-13 → 2027-03-22 (+160d) | 2026-10-14 → 2027-03-23 (+160d) |  |  |
| RHD4CZ9L06MV3300 | Testing of Medium Voltage Cables 3Cx 500 mm² - (RD-L-6)-Z9-L06-MV | 2026-10-15 → 2027-03-24 (+160d) | 2026-10-17 → 2027-03-25 (+159d) |  | resources Skilled labor [13.18 h]; Unskilled Labor [52.82 h]; Electrician [26.46 h]; Cable 13.8 kV 3Cx 500 mm² Al/XLPE,/LLDPE / Unarmored [60.69 m] → Skilled labor [13.18 h]; Unskilled Labor [52.8 h]; Electrician [26.46 h]; Cable 13.8 kV 3Cx 500 mm² Al/XLPE,/LLDPE / Unarmored [60.69 m] |
| RHD4CZ9L06MV3400 | Termination of Medium Voltage Cables 3Cx 500 mm² - (RD-L-6)-Z9-L06-MV | 2026-10-18 → 2027-03-27 (+160d) | 2026-10-19 → 2027-03-28 (+160d) |  |  |
| 9170 | **RHD4-02-002-L06-(MV)-Medium Voltage cables 3Cx 50 mm²** | 2026-10-18 → 2027-03-27 (+160d) | 2026-10-19 → 2027-03-28 (+160d) |  |  |
| RHD4CZ9L06MV3401 | Termination of Medium Voltage Cables 3Cx 50 mm² - (RD-L-6)-Z9-L06-MV | 2026-10-18 → 2027-03-27 (+160d) | 2026-10-19 → 2027-03-28 (+160d) |  |  |
| 9171 | **RHD4-02-002-L06-(MV)-Normally open Point (Outdoor Type)** | 2026-10-20 → 2027-03-29 (+160d) | 2026-10-24 → 2027-04-01 (+159d) |  |  |
| RHD4CZ9L06MV4100 | Installation for Normally open Point - (RD-L-6)-Z9-L06-MV | 2026-10-20 → 2027-03-29 (+160d) | 2026-10-21 → 2027-03-30 (+160d) |  |  |
| RHD4CZ9L06MV4200 | Termination for Normally open Point - (RD-L-6)-Z9-L06-MV | 2026-10-22 → 2027-03-31 (+160d) | 2026-10-24 → 2027-04-01 (+159d) |  |  |

| ID | Task | Start | Finish | Duration | Complete | Other |
| --- | --- | --- | --- | --- | --- | --- |
| 9173 | **RHD4-02-002-Z9-L06-Low Voltage Network - LV** | 2027-03-06 → 2027-06-29 (+115d) | 2027-03-18 → 2027-07-08 (+112d) |  |  |  |
| 9176 | **RHD4-02-002-L06-(LV)-Low Voltage cables** | 2027-03-06 → 2027-06-29 (+115d) | 2027-03-18 → 2027-07-08 (+112d) |  |  |  |
| RHD4CZ9L06LV3100 | Excavation for Low Voltage Cables for Low Voltage Network - (RD-L-6)-Z9-L06-LV | 2027-03-06 → 2027-06-29 (+115d) | 2027-03-08 → 2027-07-01 (+115d) |  |  | resources Skilled labor [23.2 h]; Unskilled Labor [46.39 h]; Equipment Opreator [46.39 h]; Excavator-Poclain [23.2 h]; Boom Truck [23.2 h]; Cable, Copper 3x10mm2/ CU/XLPE/SWA/PVC [106.54 m] → Skilled labor [23.2 h]; Unskilled Labor [46.4 h]; Equipment Opreator [46.4 h]; Excavator-Poclain [23.2 h]; Boom Truck [23.2 h]; Cable, Copper 3x10mm2/ CU/XLPE/SWA/PVC [106.54 m] |
| RHD4CZ9L06LV3200 | Cable Laying of Low Voltage Cables for Low Voltage Network - (RD-L-6)-Z9-L06-LV | 2027-03-13 → 2027-07-03 (+112d) | 2027-03-14 → 2027-07-04 (+112d) |  |  |  |
| RHD4CZ9L06LV3300 | Warning tape and Backfill for Low Voltage Cables for Low Voltage Network - (RD-L-6)-Z9-L06-LV | 2027-03-15 → 2027-07-05 (+112d) | 2027-03-16 → 2027-07-06 (+112d) |  |  |  |
| RHD4CZ9L06LV3400 | Testing of Low Voltage Cables for Low Voltage Network - (RD-L-6)-Z9-L06-LV | 2027-03-17 → 2027-07-07 (+112d) | 2027-03-18 → 2027-07-08 (+112d) |  |  | resources Skilled labor [11.65 h]; Unskilled Labor [46.39 h]; Electrician [23.2 h]; Equipment Opreator [11.65 h]; Boom Truck [11.65 h]; Cable, Copper 3x10mm2/ CU/XLPE/SWA/PVC [26.64 m] → Skilled labor [11.65 h]; Unskilled Labor [46.4 h]; Electrician [23.2 h]; Equipment Opreator [11.65 h]; Boom Truck [11.65 h]; Cable, Copper 3x10mm2/ CU/XLPE/SWA/PVC [26.64 m] |
| 9179 | **RHD4-02-002-Z9-L06-Street Lighting Network - SL** | 2026-10-11 → 2027-03-20 (+160d) | 2027-04-21 → 2027-08-11 (+112d) |  |  |  |
| 9180 | **RHD4-02-002-L06-(SL)-Street Lighting duct banks** | 2026-10-11 → 2027-03-20 (+160d) | 2026-10-19 → 2027-03-28 (+160d) |  |  |  |
| RHD4CZ9L06SL2100 | Excavation of Duct Banks for Street Lighting Network - (RD-L-6)-Z9-L06-SL | 2026-10-11 → 2027-03-20 (+160d) | 2026-10-12 → 2027-03-21 (+160d) |  |  |  |
| RHD4CZ9L06SL2200 | Installation of Duct Banks for Street Lighting Network - (RD-L-6)-Z9-L06-SL | 2026-10-13 → 2027-03-22 (+160d) | 2026-10-14 → 2027-03-23 (+160d) |  |  |  |
| RHD4CZ9L06SL2300 | Pouring of Duct Banks for Street Lighting Network - (RD-L-6)-Z9-L06-SL | 2026-10-15 → 2027-03-24 (+160d) | 2026-10-17 → 2027-03-25 (+159d) |  |  |  |
| RHD4CZ9L06SL2400 | Backfilling of Duct Banks for Street Lighting Network - (RD-L-6)-Z9-L06-SL | 2026-10-18 → 2027-03-27 (+160d) | 2026-10-19 → 2027-03-28 (+160d) |  |  |  |
| 9181 | **RHD4-02-002-L06-(SL)-Street Lighting Drawpit** | 2027-03-20 → 2027-07-10 (+112d) | 2027-03-23 → 2027-07-13 (+112d) |  |  |  |
| RHD4CZ9L06SL5100 | Excavation of Drawpit size 600x600x900mm for Street Lighting Network - (RD-L-6)-Z9-L06-SL | 2027-03-20 → 2027-07-10 (+112d) | 2027-03-21 → 2027-07-11 (+112d) |  |  | resources Skilled labor [1.85 h]; Unskilled Labor [1.85 h]; Equipment Opreator [1.42 h]; Excavator-Poclain [0.76 h]; Dump Truck [0.76 h]; Drawpit with medium duty steel cover, size600x600x900mm, [0.3 Unit] → Skilled labor [1.85 h]; Unskilled Labor [1.85 h]; Equipment Opreator [1.42 h]; Excavator-Poclain [0.8 h]; Dump Truck [0.8 h]; Drawpit with medium duty steel cover, size600x600x900mm, [0.3 Unit] |
| RHD4CZ9L06SL5200 | Installation of Drawpit size 600x600x900mm for Street Lighting Network - (RD-L-6)-Z9-L06-SL | 2027-03-22 → 2027-07-12 (+112d) | 2027-03-23 → 2027-07-13 (+112d) |  |  | resources Skilled labor [1.85 h]; Unskilled Labor [1.85 h]; Equipment Opreator [0.76 h]; Boom Truck [0.76 h]; Drawpit with medium duty steel cover, size600x600x900mm, [1.7 Unit] → Skilled labor [1.85 h]; Unskilled Labor [1.85 h]; Equipment Opreator [0.8 h]; Boom Truck [0.8 h]; Drawpit with medium duty steel cover, size600x600x900mm, [1.7 Unit] |
| 9182 | **RHD4-02-002-L06-(SL)-Street Lighting cables** | 2027-03-24 → 2027-07-14 (+112d) | 2027-04-06 → 2027-07-27 (+112d) |  |  |  |
| RHD4CZ9L06SL3100 | Excavation for Street Lighting Cables for Street Lighting Network - (RD-L-6)-Z9-L06-SL | 2027-03-24 → 2027-07-14 (+112d) | 2027-03-28 → 2027-07-18 (+112d) |  |  | resources Skilled labor [32.78 h]; Unskilled Labor [65.45 h]; Equipment Opreator [65.45 h]; Excavator-Poclain [32.78 h]; Boom Truck [32.78 h]; Cable, Copper 4x10mm2/ CU/XLPE/SWA/PVC + 1x10mm2 CU/PVC [150.26 m] → Skilled labor [32.8 h]; Unskilled Labor [65.45 h]; Equipment Opreator [65.45 h]; Excavator-Poclain [32.8 h]; Boom Truck [32.8 h]; Cable, Copper 4x10mm2/ CU/XLPE/SWA/PVC + 1x10mm2 CU/PVC [150.26 m] |
| RHD4CZ9L06SL3200 | Cable Laying of Street Lighting Cables for Street Lighting Network - (RD-L-6)-Z9-L06-SL | 2027-03-29 → 2027-07-19 (+112d) | 2027-03-31 → 2027-07-21 (+112d) |  |  | resources Skilled labor [27.23 h]; Unskilled Labor [109.12 h]; Electrician [54.56 h]; Equipment Opreator [81.79 h]; Boom Truck [27.23 h]; Cable Laying Machine [54.56 h]; Cable, Copper 4x10mm2/ CU/XLPE/SWA/PVC + 1x10mm2 CU/PVC [450.79 m] → Skilled labor [27.2 h]; Unskilled Labor [109.12 h]; Electrician [54.56 h]; Equipment Opreator [81.79 h]; Boom Truck [27.2 h]; Cable Laying Machine [54.56 h]; Cable, Copper 4x10mm2/ CU/XLPE/SWA/PVC + 1x10mm2 CU/PVC [450.79 m] |
| RHD4CZ9L06SL3300 | Warning tape and Backfill for Street Lighting Cables for Street Lighting Network - (RD-L-6)-Z9-L06-SL | 2027-04-01 → 2027-07-22 (+112d) | 2027-04-04 → 2027-07-25 (+112d) |  |  | resources Skilled labor [27.23 h]; Unskilled Labor [109.12 h]; Electrician [54.56 h]; Equipment Opreator [27.23 h]; Boom Truck [27.23 h]; Cable, Copper 4x10mm2/ CU/XLPE/SWA/PVC + 1x10mm2 CU/PVC [112.7 m] → Skilled labor [27.2 h]; Unskilled Labor [109.12 h]; Electrician [54.56 h]; Equipment Opreator [27.2 h]; Boom Truck [27.2 h]; Cable, Copper 4x10mm2/ CU/XLPE/SWA/PVC + 1x10mm2 CU/PVC [112.7 m] |
| RHD4CZ9L06SL3400 | Testing of Street Lighting Cables for Street Lighting Network - (RD-L-6)-Z9-L06-SL | 2027-04-05 → 2027-07-26 (+112d) | 2027-04-06 → 2027-07-27 (+112d) |  |  | resources Skilled labor [16.34 h]; Unskilled Labor [65.45 h]; Electrician [32.78 h]; Equipment Opreator [16.34 h]; Boom Truck [16.34 h]; Cable, Copper 4x10mm2/ CU/XLPE/SWA/PVC + 1x10mm2 CU/PVC [37.57 m] → Skilled labor [16.34 h]; Unskilled Labor [65.45 h]; Electrician [32.8 h]; Equipment Opreator [16.34 h]; Boom Truck [16.34 h]; Cable, Copper 4x10mm2/ CU/XLPE/SWA/PVC + 1x10mm2 CU/PVC [37.57 m] |
| 9183 | **RHD4-02-002-L06-(SL)-Street Lighting Poles** | 2027-04-07 → 2027-07-28 (+112d) | 2027-04-19 → 2027-08-09 (+112d) |  |  |  |
| RHD4CZ9L06SL1100 | Excavation for RC Base for Lighting Poles for Street Lighting Network - (RD-L-6)-Z9-L06-SL | 2027-04-07 → 2027-07-28 (+112d) | 2027-04-08 → 2027-07-29 (+112d) |  |  |  |
| RHD4CZ9L06SL1200 | Installation for RC Base for Lighting Poles for Street Lighting Network - (RD-L-6)-Z9-L06-SL | 2027-04-10 → 2027-07-31 (+112d) | 2027-04-11 → 2027-08-01 (+112d) |  |  |  |
| RHD4CZ9L06SL1300 | Backfill for RC Base for Lighting Poles for Street Lighting Network - (RD-L-6)-Z9-L06-SL | 2027-04-12 → 2027-08-02 (+112d) | 2027-04-13 → 2027-08-03 (+112d) |  |  |  |
| RHD4CZ9L06SL1400 | Installation for Lighting Poles for Street Lighting Network - (RD-L-6)-Z9-L06-SL | 2027-04-14 → 2027-08-04 (+112d) | 2027-04-17 → 2027-08-07 (+112d) |  |  |  |
| RHD4CZ9L06SL1500 | Luminaire Installation for Lighting Poles for Street Lighting Network - (RD-L-6)-Z9-L06-SL | 2027-04-18 → 2027-08-08 (+112d) | 2027-04-19 → 2027-08-09 (+112d) |  |  | resources Unskilled Labor [40.62 h]; Electrician [20.36 h]; Equipment Opreator [4.03 h]; Boom Truck [8.17 h]; Street Lighting( LED) Luminaire of Output ?10898 lumen [28 Unit] → Unskilled Labor [40.62 h]; Electrician [20.36 h]; Equipment Opreator [4 h]; Boom Truck [8.17 h]; Street Lighting( LED) Luminaire of Output ?10898 lumen [28 Unit] |
| 9185 | **RHD4-02-002-L06-(SL)-Street Lighting Earthing System** | 2027-04-20 → 2027-08-10 (+112d) | 2027-04-21 → 2027-08-11 (+112d) |  |  |  |
| RHD4CZ9L06SL6100 | Installation of Earthing for Lighting Poles and Fedder Pillers for Street Lighting Network - (RD-L-6)-Z9-L06-SL | 2027-04-20 → 2027-08-10 (+112d) | 2027-04-21 → 2027-08-11 (+112d) |  |  | resources Skilled labor [0.76 h]; Unskilled Labor [0.76 h]; Equipment Opreator [1.42 h]; Excavator-Poclain [0.76 h]; Dump Truck [0.76 h]; Including lighting poles circuits - ER [1 Unit] → Skilled labor [0.8 h]; Unskilled Labor [0.8 h]; Equipment Opreator [1.42 h]; Excavator-Poclain [0.8 h]; Dump Truck [0.8 h]; Including lighting poles circuits - ER [1 Unit] |
| 9191 | **RHD4-02-002-Z9-L06-Telecommunications Network - TC** | 2027-04-22 → 2027-08-12 (+112d) | 2027-05-26 → 2027-09-11 (+108d) |  |  |  |
| 9192 | **RHD4-02-002-L06-(TC)-Telecommunications Ducts** | 2027-04-22 → 2027-08-12 (+112d) | 2027-05-19 → 2027-09-04 (+108d) |  |  |  |
| RHD4CZ9L06TC2100 | Excavation of HDPE Ducts for Telecom Network - (RD-L-6)-Z9-L06-TC | 2027-04-22 → 2027-08-12 (+112d) | 2027-04-28 → 2027-08-18 (+112d) |  |  |  |
| RHD4CZ9L06TC2200 | Installation of HDPE Ducts for Telecom Network - (RD-L-6)-Z9-L06-TC | 2027-04-29 → 2027-08-19 (+112d) | 2027-05-08 → 2027-08-28 (+112d) |  |  |  |
| RHD4CZ9L06TC2400 | Backfilling of HDPE Ducts for Telecom Network - (RD-L-6)-Z9-L06-TC | 2027-05-09 → 2027-08-29 (+112d) | 2027-05-19 → 2027-09-04 (+108d) |  |  |  |
| 9193 | **RHD4-02-002-L06-(TC)-Telecommunications Manholes** | 2027-05-20 → 2027-09-05 (+108d) | 2027-05-26 → 2027-09-11 (+108d) |  |  |  |
| RHD4CZ9L06TC5100 | Excavation for Manholes for Telecom Network - (RD-L-6)-Z9-L06-TC | 2027-05-20 → 2027-09-05 (+108d) | 2027-05-23 → 2027-09-07 (+107d) |  |  |  |
| RHD4CZ9L06TC5200 | Installation of Manholes for Telecom Network - (RD-L-6)-Z9-L06-TC | 2027-05-24 → 2027-09-08 (+107d) | 2027-05-26 → 2027-09-11 (+108d) |  |  |  |
| 9195 | **RHD4-02-002-Z9-L06-Information and Communication Technologies - ICT** | 2027-05-27 → 2027-09-12 (+108d) | 2027-06-22 → 2027-10-09 (+109d) |  |  |  |
| 9196 | **RHD4-02-002-L06-(ICT)-Information and Communication Technologies Ducts** | 2027-05-27 → 2027-09-12 (+108d) | 2027-06-15 → 2027-10-02 (+109d) |  |  |  |
| RHD4CZ9L06ICT2100 | Excavation of HDPE Ducts for ICT Network - (RD-L-6)-Z9-L06-ICT | 2027-05-27 → 2027-09-12 (+108d) | 2027-06-01 → 2027-09-16 (+107d) |  |  |  |
| RHD4CZ9L06ICT2200 | Installation of HDPE Ducts for ICT Network - (RD-L-6)-Z9-L06-ICT | 2027-06-02 → 2027-09-18 (+108d) | 2027-06-09 → 2027-09-26 (+109d) |  |  |  |
| RHD4CZ9L06ICT2400 | Backfilling of HDPE Ducts for ICT Network - (RD-L-6)-Z9-L06-ICT | 2027-06-10 → 2027-09-27 (+109d) | 2027-06-15 → 2027-10-02 (+109d) |  |  |  |
| 9197 | **RHD4-02-002-L06-(ICT)-Information and Communication Technologies Manholes** | 2027-06-16 → 2027-10-03 (+109d) | 2027-06-22 → 2027-10-09 (+109d) |  |  |  |
| RHD4CZ9L06ICT5100 | Excavation for Manholes for ICT Network - (RD-L-6)-Z9-L06-ICT | 2027-06-16 → 2027-10-03 (+109d) | 2027-06-19 → 2027-10-05 (+108d) |  |  |  |
| RHD4CZ9L06ICT5200 | Installation of Manholes for ICT Network - (RD-L-6)-Z9-L06-ICT | 2027-06-20 → 2027-10-06 (+108d) | 2027-06-22 → 2027-10-09 (+109d) |  |  |  |
| 8460 | **RHD4-02-002-Z9-L02** | 2026-08-31 → 2026-08-15 (-16d) | 2027-09-12 → 2028-03-29 (+199d) |  |  |  |
| 8639 | **RHD4-02-002-Z9-L02-Road Works - RD** | 2026-09-12 → 2027-03-06 (+175d) | 2027-09-12 → 2028-03-29 (+199d) |  |  |  |
| 8640 | **RHD4-02-002-L02-(RD)-Subgrade** | 2026-09-12 → 2027-03-06 (+175d) | 2026-09-17 → 2027-03-21 (+185d) |  |  |  |
| RHD4CZ9L02RD1100 | Supply, lay and compaction subgrade compacted thickness 300 mm for Roads - (RD-L-2)-Z9-L02-RD | 2026-09-12 → 2027-03-06 (+175d) | 2026-09-17 → 2027-03-21 (+185d) | 6d → 11d |  |  |
| 8641 | **RHD4-02-002-L02-(RD)-Aggregate Base Course** | 2026-09-19 → 2027-03-22 (+184d) | 2026-09-26 → 2027-04-03 (+189d) |  |  |  |
| RHD4CZ9L02RD2100 | Supply, lay and compaction Aggregate base course compacted thickness 300 mmfor Roads - (RD-L-2)-Z9-L02-RD | 2026-09-19 → 2027-03-22 (+184d) | 2026-09-26 → 2027-04-03 (+189d) | 6d → 11d |  | resources Skilled labor [55.98 h]; Unskilled Labor [111.84 h]; Equipment Opreator [708.09 h]; Water Truck [36.92 h]; Roller compactor [111.84 h]; Grader [111.84 h]; Dump Truck [447.48 h]; Aggregate Base Courses [4562.13 m3] → Skilled labor [56 h]; Unskilled Labor [111.84 h]; Equipment Opreator [708.09 h]; Water Truck [36.92 h]; Roller compactor [111.84 h]; Grader [111.84 h]; Dump Truck [447.48 h]; Aggregate Base Courses [4562.13 m3] |
| 8642 | **RHD4-02-002-L02-(RD)-Bituminous base course Two Layers, including (MC1)&(RC2)** | 2026-09-27 → 2027-04-04 (+189d) | 2027-07-28 → 2027-12-19 (+144d) |  |  |  |
| RHD4CZ9L02RD3100 | Supply, lay and Asphaltic base course including Prime Coat (MC1) for 1st Layer - (RD-L-2)-Z9-L02-RD | 2026-09-27 → 2027-04-04 (+189d) | 2026-09-28 → 2027-04-05 (+189d) |  |  |  |
| RHD4CZ9L02RD3200 | Supply, lay and Asphaltic base course including Tack Coat (RC2) for 2nd Layer - (RD-L-2)-Z9-L02-RD | 2027-07-27 → 2027-12-18 (+144d) | 2027-07-28 → 2027-12-19 (+144d) |  |  |  |
| 8644 | **RHD4-02-002-L02-(RD)-Precast Concrete Curb** | 2027-07-29 → 2028-02-09 (+195d) | 2027-08-12 → 2028-02-24 (+196d) |  |  |  |
| RHD4CZ9L02RD5100 | Supply and installation Precast Concrete Kerb for Roads - (RD-L-2)-Z9-L02-RD | 2027-07-29 → 2028-02-09 (+195d) | 2027-08-12 → 2028-02-24 (+196d) |  |  |  |
| 8647 | **RHD4-02-002-L02-(RD)-Traffic Signage** | 2027-08-14 → 2028-02-26 (+196d) | 2027-08-23 → 2028-03-09 (+199d) |  |  |  |
| RHD4CZ9L02RD8100 | Installation of Traffic Signage for Road Network - (RD-L-2)-Z9-L02-RD | 2027-08-14 → 2028-02-26 (+196d) | 2027-08-23 → 2028-03-09 (+199d) |  |  | resources Skilled labor [196.03 h]; Unskilled Labor [98.01 h]; Electrician [51.18 h]; Equipment Opreator [40.08 h]; Boom Truck [19.6 h]; Concrete Mixer Truck [20.47 h]; Traffic signs, ground mounted, 1 Sheet Aluminium, (breakaway)Single post [43 nr]; Traffic signs, ground mounted, 1 Sheets Aluminium, (breakaway)Double post [2 nr] → Skilled labor [196 h]; Unskilled Labor [98.01 h]; Electrician [51.2 h]; Equipment Opreator [40.08 h]; Boom Truck [19.6 h]; Concrete Mixer Truck [20.47 h]; Traffic signs, ground mounted, 1 Sheet Aluminium, (breakaway)Single post [43 nr]; Traffic signs, ground mounted, 1 Sheets Aluminium, (breakaway)Double post [2 nr] |
| 8645 | **RHD4-02-002-L02-(RD)-Precast Interlocking Block Pavers** | 2027-08-24 → 2028-03-11 (+200d) | 2027-09-05 → 2028-03-22 (+199d) |  |  |  |
| RHD4CZ9L02RD6100 | Interlocking block pavers for sidewalk-footpath for Side walks and Parking areas - (RD-L-2)-Z9-L02-RD | 2027-08-24 → 2028-03-11 (+200d) | 2027-09-05 → 2028-03-22 (+199d) |  |  |  |
| 8643 | **RHD4-02-002-L02-(RD)-Bituminous concrete wearing course including tack coat (RC2)** | 2027-09-06 → 2028-03-23 (+199d) | 2027-09-07 → 2028-03-25 (+200d) |  |  |  |
| RHD4CZ9L02RD4100 | Supply, lay and compaction Asphaltic wearing course including tack Coat (RC2)for Road Network - (RD-L-2)-Z9-L02-RD | 2027-09-06 → 2028-03-23 (+199d) | 2027-09-07 → 2028-03-25 (+200d) |  |  | resources Skilled labor [19.17 h]; Unskilled Labor [115.11 h]; Equipment Opreator [287.83 h]; Bobcat [19.17 h]; Roller compactor [19.17 h]; Asphalt Paver [19.17 h]; Rubber Compactor [38.33 h]; MC1/RC2 Sprinkler [19.17 h]; Dump Truck [172.72 h]; Bituminous concrete wearing course, (Grading I - Class A), including tack coat (RC2) [915.12 m3] → Skilled labor [19.2 h]; Unskilled Labor [115.11 h]; Equipment Opreator [287.83 h]; Bobcat [19.2 h]; Roller compactor [19.2 h]; Asphalt Paver [19.2 h]; Rubber Compactor [38.33 h]; MC1/RC2 Sprinkler [19.2 h]; Dump Truck [172.72 h]; Bituminous concrete wearing course, (Grading I - Class A), including tack coat (RC2) [915.12 m3] |
| 8646 | **RHD4-02-002-L02-(RD)-Pavement Marking** | 2027-09-08 → 2028-03-26 (+200d) | 2027-09-12 → 2028-03-29 (+199d) |  |  |  |
| RHD4CZ9L02RD7100 | Pavement Markings for Road Network - (RD-L-2)-Z9-L02-RD | 2027-09-08 → 2028-03-26 (+200d) | 2027-09-12 → 2028-03-29 (+199d) |  |  |  |
| 8464 | **RHD4-02-002-Z9-L02-Storm Network - ST** | 2026-10-19 → 2026-08-27 (-53d) | 2026-11-26 → 2027-04-27 (+152d) |  |  |  |
| 8482 | **RHD4-02-002-L02-(ST)-MH Works - 1500 mm diameter** | 2026-11-01 → 2026-09-12 (-50d) | 2026-11-26 → 2027-04-25 (+150d) |  |  |  |
| RHD4CZ9L02ST3101 | Excavation and PC Blinding works for MH 1500 mm - (RD-L-2)-Z9-L02-ST | 2026-11-01 → 2026-09-12 A (-50d) | 2026-11-05 → 2026-09-16 A (-50d) |  | 0% → 100% | resources Skilled labor [49.01 h]; Unskilled Labor [49.01 h]; Equipment Opreator [78.41 h]; Excavator-Poclain [49.01 h]; Water Truck [4.9 h]; Dump Truck [24.5 h]; MH (1500mm Diameter) - ST - depth 1.50 - 2.5m [2.25 nr] → Skilled labor [49.01 h]; Unskilled Labor [49.01 h]; Equipment Opreator [78.4 h]; Excavator-Poclain [49.01 h]; Water Truck [4.9 h]; Dump Truck [24.5 h]; MH (1500mm Diameter) - ST - depth 1.50 - 2.5m [2.25 nr] |
| RHD4CZ9L02ST3201 | Installation of Base for MH 1500 mm - (RD-L-2)-Z9-L02-ST | 2026-11-07 → 2026-10-27 A (-11d) | 2026-11-11 → 2026-11-01 A (-10d) |  | 0% → 100% |  |
| RHD4CZ9L02ST3301 | MH Ring and C.Slab works and Backfilling works for MH 1500 mm - (RD-L-2)-Z9-L02-ST | 2026-11-12 → 2026-10-31 A (-12d) | 2026-11-17 → 2027-04-15 (+149d) |  | 0% → 33% |  |
| RHD4CZ9L02ST3401 | Steel Cover for MH 1500 mm - (RD-L-2)-Z9-L02-ST | 2026-11-18 → 2027-04-17 (+150d) | 2026-11-21 → 2027-04-19 (+149d) |  |  |  |
| RHD4CZ9L02ST3501 | Finishing, Benching, Testing works for MH 1500 mm - (RD-L-2)-Z9-L02-ST | 2026-11-22 → 2027-04-20 (+149d) | 2026-11-26 → 2027-04-25 (+150d) |  |  |  |

| ID | Task | Start | Finish | Complete | Other |
| --- | --- | --- | --- | --- | --- |
| 8481 | **RHD4-02-002-L02-(ST)-MH Works - 1200 mm diameter** | 2026-11-07 → 2026-08-29 (-70d) | 2026-11-17 → 2027-04-27 (+161d) |  |  |
| RHD4CZ9L02ST3100 | Excavation and PC Blinding works for MH 1200 mm - (RD-L-2)-Z9-L02-ST | 2026-11-07 → 2026-08-29 A (-70d) | 2026-11-08 → 2026-09-16 A (-53d) | 0% → 100% |  |
| RHD4CZ9L02ST3200 | Installation of Base for MH 1200 mm - (RD-L-2)-Z9-L02-ST | 2026-11-09 → 2026-10-27 A (-13d) | 2026-11-10 → 2026-10-28 A (-13d) | 0% → 100% | resources Skilled labor [19.93 h]; Unskilled Labor [19.93 h]; Equipment Opreator [7.95 h]; Boom Truck [4.03 h]; Concrete Mixer Truck [4.03 h]; MH (1200mm Diameter) - ST - depth 1.50 - 2.5m [1 nr]; MH (1200mm Diameter) - ST - depth 2.51 - 3.5m [0.25 nr] → Skilled labor [19.93 h]; Unskilled Labor [19.93 h]; Equipment Opreator [7.95 h]; Boom Truck [4 h]; Concrete Mixer Truck [4 h]; MH (1200mm Diameter) - ST - depth 1.50 - 2.5m [1 nr]; MH (1200mm Diameter) - ST - depth 2.51 - 3.5m [0.25 nr] |
| RHD4CZ9L02ST3300 | MH Ring and C.Slab works and Backfilling works for MH 1200 mm - (RD-L-2)-Z9-L02-ST | 2026-11-11 → 2027-04-11 (+151d) | 2026-11-12 → 2027-04-12 (+151d) |  |  |
| RHD4CZ9L02ST3400 | Steel Cover for MH 1200 mm - (RD-L-2)-Z9-L02-ST | 2026-11-14 → 2027-04-24 (+161d) | 2026-11-15 → 2027-04-25 (+161d) |  |  |
| RHD4CZ9L02ST3500 | Finishing, Benching, Testing works for MH 1200 mm - (RD-L-2)-Z9-L02-ST | 2026-11-16 → 2027-04-26 (+161d) | 2026-11-17 → 2027-04-27 (+161d) |  |  |
| 8483 | **RHD4-02-002-L02-(ST)-MH Works - 2000 mm diameter** | 2026-10-29 → 2026-08-29 (-61d) | 2026-11-11 → 2027-04-21 (+161d) |  |  |
| RHD4CZ9L02ST3102 | Excavation and PC Blinding works for MH 2000 mm - (RD-L-2)-Z9-L02-ST | 2026-10-29 → 2026-08-29 A (-61d) | 2026-10-31 → 2026-09-15 A (-46d) | 0% → 100% |  |
| RHD4CZ9L02ST3202 | Installation of Base for MH 2000 mm - (RD-L-2)-Z9-L02-ST | 2026-11-01 → 2026-10-27 A (-5d) | 2026-11-03 → 2027-04-13 (+161d) | 0% → 67% |  |
| RHD4CZ9L02ST3302 | MH Ring and C.Slab works and Backfilling works for MH 2000 mm - (RD-L-2)-Z9-L02-ST | 2026-11-04 → 2027-04-14 (+161d) | 2026-11-07 → 2027-04-17 (+161d) |  |  |
| RHD4CZ9L02ST3402 | Steel Cover for MH 2000 mm - (RD-L-2)-Z9-L02-ST | 2026-11-08 → 2027-04-18 (+161d) | 2026-11-09 → 2027-04-19 (+161d) |  |  |
| RHD4CZ9L02ST3502 | Finishing, Benching, Testing works for MH 2000 mm - (RD-L-2)-Z9-L02-ST | 2026-11-10 → 2027-04-20 (+161d) | 2026-11-11 → 2027-04-21 (+161d) |  |  |
| 8473 | **RHD4-02-002-L02-(ST)-GRP Pipes - 1200 mm diameter** | 2026-10-19 → 2026-08-27 (-53d) | 2026-11-24 → 2027-04-24 (+151d) |  |  |
| RHD4CZ9L02ST1108 | Excavation works for GRP Pipe Line 1200 mm - (RD-L-2)-Z9-L02-ST | 2026-10-19 → 2026-08-27 A (-53d) | 2026-10-20 → 2026-08-29 A (-52d) | 0% → 100% |  |
| RHD4CZ9L02ST1208 | Bedding works for GRP Pipe Line 1200 mm - (RD-L-2)-Z9-L02-ST | 2026-10-21 → 2026-08-29 A (-53d) | 2026-10-22 → 2026-08-30 A (-53d) | 0% → 100% |  |
| RHD4CZ9L02ST1308 | Installing for GRP Pipe Line 1200 mm - (RD-L-2)-Z9-L02-ST | 2026-11-18 → 2026-09-01 A (-78d) | 2026-11-19 → 2027-04-19 (+151d) | 0% → 26% |  |
| RHD4CZ9L02ST1508 | Backfilling and warning tape works for GRP Pipe Line 1200 mm - (RD-L-2)-Z9-L02-ST | 2026-11-23 → 2026-09-01 A (-83d) | 2026-11-24 → 2027-04-24 (+151d) | 0% → 24% |  |
| RHD4CZ9L02ST1408 | Primary Test for GRP Pipe Line 1200 mm - (RD-L-2)-Z9-L02-ST | 2026-11-21 → 2027-04-20 (+150d) | 2026-11-22 → 2027-04-21 (+150d) |  |  |
| 8472 | **RHD4-02-002-L02-(ST)-GRP Pipes - 1100 mm diameter** | 2026-10-19 → 2026-08-29 (-51d) | 2026-11-01 → 2027-03-14 (+133d) |  |  |
| RHD4CZ9L02ST1107 | Excavation works for GRP Pipe Line 1100 mm - (RD-L-2)-Z9-L02-ST | 2026-10-19 → 2026-08-29 A (-51d) | 2026-10-20 → 2026-08-30 A (-51d) | 0% → 100% |  |
| RHD4CZ9L02ST1207 | Bedding works for GRP Pipe Line 1100 mm - (RD-L-2)-Z9-L02-ST | 2026-10-24 → 2027-03-02 (+129d) | 2026-10-25 → 2027-03-03 (+129d) |  |  |
| RHD4CZ9L02ST1307 | Installing for GRP Pipe Line 1100 mm - (RD-L-2)-Z9-L02-ST | 2026-10-26 → 2027-03-04 (+129d) | 2026-10-27 → 2027-03-06 (+130d) |  |  |
| RHD4CZ9L02ST1407 | Primary Test for GRP Pipe Line 1100 mm - (RD-L-2)-Z9-L02-ST | 2026-10-28 → 2027-03-07 (+130d) | 2026-10-29 → 2027-03-08 (+130d) |  |  |
| RHD4CZ9L02ST1507 | Backfilling and warning tape works for GRP Pipe Line 1100 mm - (RD-L-2)-Z9-L02-ST | 2026-10-31 → 2027-03-13 (+133d) | 2026-11-01 → 2027-03-14 (+133d) |  |  |
| 8471 | **RHD4-02-002-L02-(ST)-GRP Pipes - 1000 mm diameter** | 2026-10-21 → 2026-08-29 (-53d) | 2026-11-03 → 2027-03-14 (+131d) |  |  |
| RHD4CZ9L02ST1106 | Excavation works for GRP Pipe Line 1000 mm - (RD-L-2)-Z9-L02-ST | 2026-10-21 → 2026-08-29 A (-53d) | 2026-10-22 → 2026-08-30 A (-53d) | 0% → 100% |  |
| RHD4CZ9L02ST1206 | Bedding works for GRP Pipe Line 1000 mm - (RD-L-2)-Z9-L02-ST | 2026-10-26 → 2026-09-19 A (-37d) | 2026-10-27 → 2026-09-20 A (-37d) | 0% → 100% |  |
| RHD4CZ9L02ST1306 | Installing for GRP Pipe Line 1000 mm - (RD-L-2)-Z9-L02-ST | 2026-10-28 → 2026-09-20 A (-38d) | 2026-10-29 → 2026-09-21 A (-38d) | 0% → 100% |  |
| RHD4CZ9L02ST1506 | Backfilling and warning tape works for GRP Pipe Line 1000 mm - (RD-L-2)-Z9-L02-ST | 2026-11-02 → 2026-09-22 A (-41d) | 2026-11-03 → 2026-09-22 A (-42d) | 0% → 100% |  |
| RHD4CZ9L02ST1406 | Primary Test for GRP Pipe Line 1000 mm - (RD-L-2)-Z9-L02-ST | 2026-10-31 → 2027-03-13 (+133d) | 2026-11-01 → 2027-03-14 (+133d) |  |  |
| 8470 | **RHD4-02-002-L02-(ST)-GRP Pipes - 900 mm diameter** | 2026-10-21 → 2026-08-29 (-53d) | 2026-11-01 → 2027-03-03 (+122d) |  |  |
| RHD4CZ9L02ST1105 | Excavation works for GRP Pipe Line 900 mm - (RD-L-2)-Z9-L02-ST | 2026-10-21 → 2026-08-29 A (-53d) | 2026-10-22 → 2026-08-30 A (-53d) | 0% → 100% |  |
| RHD4CZ9L02ST1205 | Bedding works for GRP Pipe Line 900 mm - (RD-L-2)-Z9-L02-ST | 2026-10-24 → 2026-09-01 A (-53d) | 2026-10-25 → 2026-09-02 A (-53d) | 0% → 100% |  |
| RHD4CZ9L02ST1305 | Installing for GRP Pipe Line 900 mm - (RD-L-2)-Z9-L02-ST | 2026-10-26 → 2026-09-03 A (-53d) | 2026-10-27 → 2026-09-19 A (-38d) | 0% → 100% |  |
| RHD4CZ9L02ST1505 | Backfilling and warning tape works for GRP Pipe Line 900 mm - (RD-L-2)-Z9-L02-ST | 2026-10-31 → 2026-09-20 A (-41d) | 2026-11-01 → 2026-09-21 A (-41d) | 0% → 100% |  |
| RHD4CZ9L02ST1405 | Primary Test for GRP Pipe Line 900 mm - (RD-L-2)-Z9-L02-ST | 2026-10-28 → 2027-03-02 (+125d) | 2026-10-29 → 2027-03-03 (+125d) |  |  |
| 8469 | **RHD4-02-002-L02-(ST)-GRP Pipes - 800 mm diameter** | 2026-10-21 → 2026-08-29 (-53d) | 2026-11-03 → 2027-03-14 (+131d) |  |  |
| RHD4CZ9L02ST1104 | Excavation works for GRP Pipe Line 800 mm - (RD-L-2)-Z9-L02-ST | 2026-10-21 → 2026-08-29 A (-53d) | 2026-10-22 → 2026-08-30 A (-53d) | 0% → 100% | resources Skilled labor [5.99 h]; Unskilled Labor [5.99 h]; Equipment Opreator [7.19 h]; Excavator-Poclain [5.99 h]; Dump Truck [1.2 h]; GRP (800mm Diameter) - ST - Depth less than 1.5 m [10.96 m]; GRP (800mm Diameter) - ST - Depth: 1.51m - 2.5m → Skilled labor [5.99 h]; Unskilled Labor [5.99 h]; Equipment Opreator [7.2 h]; Excavator-Poclain [5.99 h]; Dump Truck [1.2 h]; GRP (800mm Diameter) - ST - Depth less than 1.5 m [10.96 m]; GRP (800mm Diameter) - ST - Depth: 1.51m - 2.5m |
| RHD4CZ9L02ST1204 | Bedding works for GRP Pipe Line 800 mm - (RD-L-2)-Z9-L02-ST | 2026-10-24 → 2027-03-02 (+129d) | 2026-10-25 → 2027-03-03 (+129d) |  | resources Skilled labor [5.99 h]; Unskilled Labor [11.98 h]; Equipment Opreator [11.98 h]; Excavator-Poclain [5.99 h]; Dump Truck [5.99 h]; GRP (800mm Diameter) - ST - Depth less than 1.5 m [5.48 m]; GRP (800mm Diameter) - ST - Depth: 1.51m - 2.5m → Skilled labor [5.99 h]; Unskilled Labor [12 h]; Equipment Opreator [12 h]; Excavator-Poclain [5.99 h]; Dump Truck [5.99 h]; GRP (800mm Diameter) - ST - Depth less than 1.5 m [5.48 m]; GRP (800mm Diameter) - ST - Depth: 1.51m - 2.5m |
| RHD4CZ9L02ST1304 | Installing for GRP Pipe Line 800 mm - (RD-L-2)-Z9-L02-ST | 2026-10-28 → 2027-03-04 (+127d) | 2026-10-29 → 2027-03-06 (+128d) |  | resources Unskilled Labor [7.95 h]; Plumber [4.03 h]; GRP (800mm Diameter) - ST - Depth less than 1.5 m [49.33 m]; GRP (800mm Diameter) - ST - Depth: 1.51m - 2.5m → Unskilled Labor [7.95 h]; Plumber [4 h]; GRP (800mm Diameter) - ST - Depth less than 1.5 m [49.33 m]; GRP (800mm Diameter) - ST - Depth: 1.51m - 2.5m |
| RHD4CZ9L02ST1404 | Primary Test for GRP Pipe Line 800 mm - (RD-L-2)-Z9-L02-ST | 2026-10-31 → 2027-03-07 (+127d) | 2026-11-01 → 2027-03-08 (+127d) |  |  |
| RHD4CZ9L02ST1504 | Backfilling and warning tape works for GRP Pipe Line 800 mm - (RD-L-2)-Z9-L02-ST | 2026-11-02 → 2027-03-13 (+131d) | 2026-11-03 → 2027-03-14 (+131d) |  | resources Skilled labor [5.99 h]; Unskilled Labor [11.98 h]; Equipment Opreator [11.98 h]; Excavator-Poclain [5.99 h]; Dump Truck [5.99 h]; GRP (800mm Diameter) - ST - Depth less than 1.5 m [21.92 m]; GRP (800mm Diameter) - ST - Depth: 1.51m - 2.5m → Skilled labor [5.99 h]; Unskilled Labor [12 h]; Equipment Opreator [12 h]; Excavator-Poclain [5.99 h]; Dump Truck [5.99 h]; GRP (800mm Diameter) - ST - Depth less than 1.5 m [21.92 m]; GRP (800mm Diameter) - ST - Depth: 1.51m - 2.5m |
| 8467 | **RHD4-02-002-L02-(ST)-GRP Pipes - 600 mm diameter** | 2026-10-21 → 2026-08-29 (-53d) | 2026-11-01 → 2027-03-16 (+135d) |  |  |
| RHD4CZ9L02ST1102 | Excavation works for GRP Pipe Line 600 mm - (RD-L-2)-Z9-L02-ST | 2026-10-21 → 2026-08-29 A (-53d) | 2026-10-22 → 2027-03-03 (+132d) | 0% → 71% | resources Skilled labor [13.61 h]; Unskilled Labor [13.61 h]; Equipment Opreator [16.34 h]; Excavator-Poclain [13.61 h]; Dump Truck [2.72 h]; GRP (600mm Diameter) - ST - Depth less than 1.5 m [6.88 m]; GRP (600mm Diameter) - ST - Depth: 1.51m - 2.5m [27.06 m] → Skilled labor [13.6 h]; Unskilled Labor [13.6 h]; Equipment Opreator [16.34 h]; Excavator-Poclain [13.6 h]; Dump Truck [2.72 h]; GRP (600mm Diameter) - ST - Depth less than 1.5 m [6.88 m]; GRP (600mm Diameter) - ST - Depth: 1.51m - 2.5m [27.06 m] |
| RHD4CZ9L02ST1202 | Bedding works for GRP Pipe Line 600 mm - (RD-L-2)-Z9-L02-ST | 2026-10-24 → 2027-03-04 (+131d) | 2026-10-25 → 2027-03-06 (+132d) |  | resources Skilled labor [13.61 h]; Unskilled Labor [27.12 h]; Equipment Opreator [27.12 h]; Excavator-Poclain [13.61 h]; Dump Truck [13.61 h]; GRP (600mm Diameter) - ST - Depth less than 1.5 m [3.44 m]; GRP (600mm Diameter) - ST - Depth: 1.51m - 2.5m [9.02 m] → Skilled labor [13.6 h]; Unskilled Labor [27.12 h]; Equipment Opreator [27.12 h]; Excavator-Poclain [13.6 h]; Dump Truck [13.6 h]; GRP (600mm Diameter) - ST - Depth less than 1.5 m [3.44 m]; GRP (600mm Diameter) - ST - Depth: 1.51m - 2.5m [9.02 m] |
| RHD4CZ9L02ST1302 | Installing for GRP Pipe Line 600 mm - (RD-L-2)-Z9-L02-ST | 2026-10-26 → 2027-03-07 (+132d) | 2026-10-27 → 2027-03-08 (+132d) |  | resources Unskilled Labor [27.12 h]; Plumber [13.61 h]; GRP (600mm Diameter) - ST - Depth less than 1.5 m [30.97 m]; GRP (600mm Diameter) - ST - Depth: 1.51m - 2.5m [72.15 m] → Unskilled Labor [27.12 h]; Plumber [13.6 h]; GRP (600mm Diameter) - ST - Depth less than 1.5 m [30.97 m]; GRP (600mm Diameter) - ST - Depth: 1.51m - 2.5m [72.15 m] |
| RHD4CZ9L02ST1402 | Primary Test for GRP Pipe Line 600 mm - (RD-L-2)-Z9-L02-ST | 2026-10-28 → 2027-03-13 (+136d) | 2026-10-29 → 2027-03-14 (+136d) |  | resources Unskilled Labor [13.61 h]; Plumber [13.61 h]; Equipment Opreator [13.61 h]; Water Truck [13.61 h]; GRP (600mm Diameter) - ST - Depth less than 1.5 m [13.77 m]; GRP (600mm Diameter) - ST - Depth: 1.51m - 2.5m [36.08 m] → Unskilled Labor [13.6 h]; Plumber [13.6 h]; Equipment Opreator [13.6 h]; Water Truck [13.6 h]; GRP (600mm Diameter) - ST - Depth less than 1.5 m [13.77 m]; GRP (600mm Diameter) - ST - Depth: 1.51m - 2.5m [36.08 m] |
| RHD4CZ9L02ST1502 | Backfilling and warning tape works for GRP Pipe Line 600 mm - (RD-L-2)-Z9-L02-ST | 2026-10-31 → 2027-03-15 (+135d) | 2026-11-01 → 2027-03-16 (+135d) |  | resources Skilled labor [13.61 h]; Unskilled Labor [27.12 h]; Equipment Opreator [27.12 h]; Excavator-Poclain [13.61 h]; Dump Truck [13.61 h]; GRP (600mm Diameter) - ST - Depth less than 1.5 m [13.77 m]; GRP (600mm Diameter) - ST - Depth: 1.51m - 2.5m [36.08 m] → Skilled labor [13.6 h]; Unskilled Labor [27.12 h]; Equipment Opreator [27.12 h]; Excavator-Poclain [13.6 h]; Dump Truck [13.6 h]; GRP (600mm Diameter) - ST - Depth less than 1.5 m [13.77 m]; GRP (600mm Diameter) - ST - Depth: 1.51m - 2.5m [36.08 m] |
| 8466 | **RHD4-02-002-L02-(ST)-GRP Pipes - 500 mm diameter** | 2026-10-24 → 2026-09-01 (-53d) | 2026-11-03 → 2027-03-18 (+135d) |  |  |
| RHD4CZ9L02ST1101 | Excavation works for GRP Pipe Line 500 mm - (RD-L-2)-Z9-L02-ST | 2026-10-24 → 2026-09-01 A (-53d) | 2026-10-25 → 2026-09-02 A (-53d) | 0% → 100% | resources Skilled labor [3.7 h]; Unskilled Labor [3.7 h]; Equipment Opreator [4.47 h]; Excavator-Poclain [3.7 h]; Dump Truck [0.76 h]; GRP (500mm Diameter) - ST - Depth: 1.51m - 2.5m [10.31 m] → Skilled labor [3.7 h]; Unskilled Labor [3.7 h]; Equipment Opreator [4.47 h]; Excavator-Poclain [3.7 h]; Dump Truck [0.8 h]; GRP (500mm Diameter) - ST - Depth: 1.51m - 2.5m [10.31 m] |
| RHD4CZ9L02ST1201 | Bedding works for GRP Pipe Line 500 mm - (RD-L-2)-Z9-L02-ST | 2026-10-26 → 2027-03-07 (+132d) | 2026-10-27 → 2027-03-08 (+132d) |  |  |
| RHD4CZ9L02ST1301 | Installing for GRP Pipe Line 500 mm - (RD-L-2)-Z9-L02-ST | 2026-10-28 → 2027-03-13 (+136d) | 2026-10-29 → 2027-03-14 (+136d) |  |  |
| RHD4CZ9L02ST1401 | Primary Test for GRP Pipe Line 500 mm - (RD-L-2)-Z9-L02-ST | 2026-10-31 → 2027-03-15 (+135d) | 2026-11-01 → 2027-03-16 (+135d) |  |  |
| RHD4CZ9L02ST1501 | Backfilling and warning tape works for GRP Pipe Line 500 mm - (RD-L-2)-Z9-L02-ST | 2026-11-02 → 2027-03-17 (+135d) | 2026-11-03 → 2027-03-18 (+135d) |  |  |
| 8479 | **RHD4-02-002-L02-(ST)-UPVC Pipes - 300 mm diameter** | 2026-10-26 → 2026-09-19 (-37d) | 2026-11-10 → 2027-04-22 (+163d) |  |  |
| RHD4CZ9L02ST2100 | Excavation works for UPVC Pipe Line 300 mm - (RD-L-2)-Z9-L02-ST | 2026-10-26 → 2026-09-19 A (-37d) | 2026-10-28 → 2027-04-10 (+164d) | 0% → 13% |  |
| RHD4CZ9L02ST2200 | Bedding works for UPVC Pipe Line 300 mm - (RD-L-2)-Z9-L02-ST | 2026-10-29 → 2026-09-21 A (-38d) | 2026-11-01 → 2027-04-13 (+163d) | 0% → 14% |  |
| RHD4CZ9L02ST2300 | Installing for UPVC Pipe Line 300 mm - (RD-L-2)-Z9-L02-ST | 2026-11-02 → 2026-09-22 A (-41d) | 2026-11-04 → 2027-04-17 (+164d) | 0% → 12% |  |
| RHD4CZ9L02ST2400 | Primary Test for UPVC Pipe Line 300 mm - (RD-L-2)-Z9-L02-ST | 2026-11-05 → 2027-04-18 (+164d) | 2026-11-07 → 2027-04-19 (+163d) |  |  |
| RHD4CZ9L02ST2500 | Backfilling and warning tape works for UPVC Pipe Line 300 mm - (RD-L-2)-Z9-L02-ST | 2026-11-08 → 2027-04-20 (+163d) | 2026-11-10 → 2027-04-22 (+163d) |  |  |
| 8487 | **RHD4-02-002-L02-(ST)-Concrete Encasement** | 2026-11-03 → 2027-04-15 (+163d) | 2026-11-04 → 2027-04-17 (+164d) |  |  |
| RHD4CZ9L02ST6100 | Pipe Encasement for Storm Pipelines - (RD-L-2)-Z9-L02-ST | 2026-11-03 → 2027-04-15 (+163d) | 2026-11-04 → 2027-04-17 (+164d) |  | resources Skilled labor [8.82 h]; Unskilled Labor [8.82 h]; Equipment Opreator [9.8 h]; Concrete Mixer Truck [0.87 h]; Dump Truck [8.82 h]; Pipe Encasement - ST [162.84 m3] → Skilled labor [8.8 h]; Unskilled Labor [8.8 h]; Equipment Opreator [9.8 h]; Concrete Mixer Truck [0.87 h]; Dump Truck [8.8 h]; Pipe Encasement - ST [162.84 m3] |
| 8488 | **RHD4-02-002-Z9-L02-Catch Basin - ST** | 2026-11-14 → 2026-10-27 (-18d) | 2026-12-10 → 2027-05-05 (+146d) |  |  |
| 8489 | **RHD4-02-002-L02-(ST)-Single Catch Basin Works** | 2026-11-14 → 2026-10-27 (-18d) | 2026-12-10 → 2027-05-05 (+146d) |  |  |
| RHD4CZ9L02ST7100 | Excavation works for Single Catch Basin - (RD-L-2)-Z9-L02-ST | 2026-11-14 → 2026-10-27 A (-18d) | 2026-11-17 → 2026-10-29 A (-19d) | 0% → 100% |  |
| RHD4CZ9L02ST7300 | Rings & C.Slab & Final Backfill for Single Catch Basin - (RD-L-2)-Z9-L02-ST | 2026-11-23 → 2026-10-29 A (-25d) | 2026-11-28 → 2027-04-22 (+145d) | 0% → 45% |  |
| RHD4CZ9L02ST7200 | PC Blinding, Installation and Pipe connection for Single Catch Basin - (RD-L-2)-Z9-L02-ST | 2026-11-18 → 2026-10-31 A (-18d) | 2026-11-22 → 2027-04-17 (+146d) | 0% → 45% |  |
| RHD4CZ9L02ST7400 | Steel Cover for Single Catch Basin - (RD-L-2)-Z9-L02-ST | 2026-11-29 → 2027-04-24 (+146d) | 2026-12-02 → 2027-04-27 (+146d) |  |  |
| RHD4CZ9L02ST7500 | Finishing and Insulation works for Single Catch Basin - (RD-L-2)-Z9-L02-ST | 2026-12-03 → 2027-04-28 (+146d) | 2026-12-10 → 2027-05-05 (+146d) |  |  |
| 8513 | **RHD4-02-002-Z9-L02-Sewage Network - SW** | 2026-11-28 → 2026-08-15 (-105d) | 2027-04-03 → 2027-08-07 (+126d) |  |  |

| ID | Task | Start | Finish | Complete | Other |
| --- | --- | --- | --- | --- | --- |
| 1895 | **RHD4-02-002-L02-(SW)-GRP Pipes - 500 mm diameter** | 2026-11-28 → 2027-04-26 (+149d) | 2026-12-08 → 2027-05-06 (+149d) |  |  |
| RHD4CZ9L02SW1102 | Excavation works for GRP Pipe Line 500 mm - (RD-L-2)-Z9-L02-SW | 2026-11-28 → 2027-04-26 (+149d) | 2026-11-29 → 2027-04-27 (+149d) |  |  |
| RHD4CZ9L02SW1202 | Bedding works for GRP Pipe Line 500 mm - (RD-L-2)-Z9-L02-SW | 2026-11-30 → 2027-04-28 (+149d) | 2026-12-01 → 2027-04-29 (+149d) |  |  |
| RHD4CZ9L02SW1302 | Installing for GRP Pipe Line 500 mm - (RD-L-2)-Z9-L02-SW | 2026-12-02 → 2027-05-01 (+150d) | 2026-12-03 → 2027-05-02 (+150d) |  |  |
| RHD4CZ9L02SW1402 | Primary Test for GRP Pipe Line 500 mm - (RD-L-2)-Z9-L02-SW | 2026-12-05 → 2027-05-03 (+149d) | 2026-12-06 → 2027-05-04 (+149d) |  |  |
| RHD4CZ9L02SW1502 | Backfilling and warning tape works for GRP Pipe Line 500 mm - (RD-L-2)-Z9-L02-SW | 2026-12-07 → 2027-05-05 (+149d) | 2026-12-08 → 2027-05-06 (+149d) |  |  |
| 957 | **RHD4-02-002-L02-(SW)-MH Works - 1200 mm diameter with Back drop** | 2026-12-09 → 2027-05-04 (+146d) | 2026-12-20 → 2027-05-19 (+150d) |  |  |
| RHD4CZ9L02SW3101 | Excavation and PC Blinding works for MH 1200 mm - (RD-L-2)-Z9-L02-SW | 2026-12-09 → 2027-05-04 (+146d) | 2026-12-10 → 2027-05-05 (+146d) |  |  |
| RHD4CZ9L02SW3201 | Installation of Base for MH 1200 mm - (RD-L-2)-Z9-L02-SW | 2026-12-12 → 2027-05-06 (+145d) | 2026-12-13 → 2027-05-08 (+146d) |  |  |
| RHD4CZ9L02SW3301 | MH Ring and C.Slab works and Backfilling works for MH 1200 mm - (RD-L-2)-Z9-L02-SW | 2026-12-14 → 2027-05-09 (+146d) | 2026-12-15 → 2027-05-10 (+146d) |  |  |
| RHD4CZ9L02SW3401 | Steel Cover for MH 1200 mm - (RD-L-2)-Z9-L02-SW | 2026-12-16 → 2027-05-11 (+146d) | 2026-12-17 → 2027-05-12 (+146d) |  | resources Skilled labor [3.59 h]; Unskilled Labor [7.3 h]; Equipment Opreator [0.76 h]; Boom Truck [0.76 h]; MH (1200mm Diameter) - SW - depth 4.51-5.5 m with back drop [0.05 nr] → Skilled labor [3.59 h]; Unskilled Labor [7.3 h]; Equipment Opreator [0.8 h]; Boom Truck [0.8 h]; MH (1200mm Diameter) - SW - depth 4.51-5.5 m with back drop [0.05 nr] |
| RHD4CZ9L02SW3501 | Finishing, Benching, Testing works for MH 1200 mm - (RD-L-2)-Z9-L02-SW | 2026-12-19 → 2027-05-13 (+145d) | 2026-12-20 → 2027-05-19 (+150d) |  |  |
| 8523 | **RHD4-02-002-L02-(SW)-MH Works - 1200 mm diameter** | 2026-12-21 → 2026-09-15 (-97d) | 2027-04-03 → 2027-08-07 (+126d) |  |  |
| RHD4CZ9L02SW3100 | Excavation and PC Blinding works for MH 1200 mm - (RD-L-2)-Z9-L02-SW | 2026-12-21 → 2026-09-15 A (-97d) | 2027-01-04 → 2027-05-27 (+143d) | 0% → 66% | resources Skilled labor [132.54 h]; Unskilled Labor [132.54 h]; Equipment Opreator [212.04 h]; Excavator-Poclain [132.54 h]; Water Truck [13.29 h]; Dump Truck [66.21 h]; MH (1200mm Diameter) - SW - depth 0 - 1.5m [1.25 nr]; MH (1200mm Diameter) - SW - depth 1.51 - 2.5m [1.25 nr]; MH (1200mm Diameter) - SW - depth 2.51 - 3.5m [3.25 nr]; MH (1200mm Diameter) - SW - depth 3.51 -4.5m [0.5 nr]; MH (1200mm Diameter) - SW - depth 4.51 -5.5m [0.25 nr] → Skilled labor [132.54 h]; Unskilled Labor [132.54 h]; Equipment Opreator [212 h]; Excavator-Poclain [132.54 h]; Water Truck [13.29 h]; Dump Truck [66.21 h]; MH (1200mm Diameter) - SW - depth 0 - 1.5m [1.25 nr]; MH (1200mm Diameter) - SW - depth 1.51 - 2.5m [1.25 nr]; MH (1200mm Diameter) - SW - depth 2.51 - 3.5m [3.25 nr]; MH (1200mm Diameter) - SW - depth 3.51 -4.5m [0.5 nr]; MH (1200mm Diameter) - SW - depth 4.51 -5.5m [0.25 nr] |
| RHD4CZ9L02SW3200 | Installation of Base for MH 1200 mm - (RD-L-2)-Z9-L02-SW | 2027-01-05 → 2026-09-19 A (-108d) | 2027-01-28 → 2027-06-08 (+131d) | 0% → 30% |  |
| RHD4CZ9L02SW3300 | MH Ring and C.Slab works and Backfilling works for MH 1200 mm - (RD-L-2)-Z9-L02-SW | 2027-01-30 → 2027-06-09 (+130d) | 2027-02-23 → 2027-07-03 (+130d) |  |  |
| RHD4CZ9L02SW3400 | Steel Cover for MH 1200 mm - (RD-L-2)-Z9-L02-SW | 2027-02-24 → 2027-07-04 (+130d) | 2027-03-06 → 2027-07-13 (+129d) |  | resources Skilled labor [94.42 h]; Unskilled Labor [188.73 h]; Equipment Opreator [18.84 h]; Boom Truck [18.84 h]; MH (1200mm Diameter) - SW - depth 0 - 1.5m [0.25 nr]; MH (1200mm Diameter) - SW - depth 1.51 - 2.5m [0.25 nr]; MH (1200mm Diameter) - SW - depth 2.51 - 3.5m [0.65 nr]; MH (1200mm Diameter) - SW - depth 3.51 -4.5m [0.1 nr]; MH (1200mm Diameter) - SW - depth 4.51 -5.5m [0.05 nr] → Skilled labor [94.4 h]; Unskilled Labor [188.73 h]; Equipment Opreator [18.84 h]; Boom Truck [18.84 h]; MH (1200mm Diameter) - SW - depth 0 - 1.5m [0.25 nr]; MH (1200mm Diameter) - SW - depth 1.51 - 2.5m [0.25 nr]; MH (1200mm Diameter) - SW - depth 2.51 - 3.5m [0.65 nr]; MH (1200mm Diameter) - SW - depth 3.51 -4.5m [0.1 nr]; MH (1200mm Diameter) - SW - depth 4.51 -5.5m [0.05 nr] |
| RHD4CZ9L02SW3500 | Finishing, Benching, Testing works for MH 1200 mm - (RD-L-2)-Z9-L02-SW | 2027-03-07 → 2027-07-14 (+129d) | 2027-04-03 → 2027-08-07 (+126d) |  |  |
| 8519 | **RHD4-02-002-L02-(SW)-UPVC Pipes - 200 mm diameter** | 2026-11-30 → 2026-08-15 (-107d) | 2027-01-11 → 2027-06-07 (+147d) |  |  |
| RHD4CZ9L02SW2100 | Excavation works for UPVC Pipe Line 200 mm - (RD-L-2)-Z9-L02-SW | 2026-11-30 → 2026-08-15 A (-107d) | 2026-12-08 → 2027-04-29 (+142d) | 0% → 88% |  |
| RHD4CZ9L02SW2200 | Bedding works for UPVC Pipe Line 200 mm - (RD-L-2)-Z9-L02-SW | 2026-12-09 → 2026-08-16 A (-115d) | 2026-12-16 → 2027-05-08 (+143d) | 0% → 84% | resources Skilled labor [76.01 h]; Unskilled Labor [151.92 h]; Equipment Opreator [151.92 h]; Excavator-Poclain [76.01 h]; Dump Truck [76.01 h]; UPVC (200mm Diameter) - SW - Depth: less than 1.5m [28.84 m]; UPVC (200mm Diameter) - SW - Depth: 1.51m - 2.5m [32.5 m]; UPVC (200mm Diameter) - SW - Depth: 2.51m - 3.5m [4.75 m] → Skilled labor [76 h]; Unskilled Labor [151.92 h]; Equipment Opreator [151.92 h]; Excavator-Poclain [76 h]; Dump Truck [76 h]; UPVC (200mm Diameter) - SW - Depth: less than 1.5m [28.84 m]; UPVC (200mm Diameter) - SW - Depth: 1.51m - 2.5m [32.5 m]; UPVC (200mm Diameter) - SW - Depth: 2.51m - 3.5m [4.75 m] |
| RHD4CZ9L02SW2300 | Installing for UPVC Pipe Line 200 mm - (RD-L-2)-Z9-L02-SW | 2026-12-17 → 2026-08-17 A (-122d) | 2026-12-27 → 2027-05-23 (+147d) | 0% → 84% |  |
| RHD4CZ9L02SW2500 | Backfilling and warning tape works for UPVC Pipe Line 200 mm - (RD-L-2)-Z9-L02-SW | 2027-01-03 → 2026-08-18 A (-138d) | 2027-01-11 → 2027-06-07 (+147d) | 0% → 84% |  |
| RHD4CZ9L02SW2400 | Primary Test for UPVC Pipe Line 200 mm - (RD-L-2)-Z9-L02-SW | 2026-12-28 → 2027-05-24 (+147d) | 2027-01-02 → 2027-05-29 (+147d) |  |  |
| 8550 | **RHD4-02-002-Z9-L02-Potable Network - PT** | 2027-01-03 → 2027-05-30 (+147d) | 2027-04-06 → 2027-08-26 (+142d) |  |  |
| 8552 | **RHD4-02-002-L02-(PT)-HDPE Pipes - 160 mm diameter** | 2027-01-03 → 2027-05-30 (+147d) | 2027-02-17 → 2027-07-14 (+147d) |  |  |
| RHD4CZ9L02PT1101 | Excavation works for HDPE Pipline 160 mm - (RD-L-2)-Z9-L02-PT | 2027-01-03 → 2027-05-30 (+147d) | 2027-01-11 → 2027-06-07 (+147d) |  |  |
| RHD4CZ9L02PT1201 | Bedding works for HDPE Pipline 160 mm - (RD-L-2)-Z9-L02-PT | 2027-01-12 → 2027-06-08 (+147d) | 2027-01-19 → 2027-06-15 (+147d) |  | resources Skilled labor [66.76 h]; Unskilled Labor [133.62 h]; Equipment Opreator [133.62 h]; Excavator-Poclain [66.76 h]; Dump Truck [66.76 h]; HDPE (160mm Diameter) - PT - Depth: less than 1.5m [79.45 m]; HDPE (160mm Diameter) - PT - Depth: 1.51m - 2.5m [4.79 m]; HDPE (160mm Diameter) - PT - Depth: more than 2.5m [0.12 m] → Skilled labor [66.76 h]; Unskilled Labor [133.6 h]; Equipment Opreator [133.6 h]; Excavator-Poclain [66.76 h]; Dump Truck [66.76 h]; HDPE (160mm Diameter) - PT - Depth: less than 1.5m [79.45 m]; HDPE (160mm Diameter) - PT - Depth: 1.51m - 2.5m [4.79 m]; HDPE (160mm Diameter) - PT - Depth: more than 2.5m [0.12 m] |
| RHD4CZ9L02PT1301 | Installing for HDPE Pipline 160 mm - (RD-L-2)-Z9-L02-PT | 2027-01-20 → 2027-06-16 (+147d) | 2027-02-01 → 2027-06-28 (+147d) |  |  |
| RHD4CZ9L02PT1401 | Primary Test for HDPE Pipline 160 mm - (RD-L-2)-Z9-L02-PT | 2027-02-02 → 2027-06-29 (+147d) | 2027-02-07 → 2027-07-04 (+147d) |  | resources Unskilled Labor [46.39 h]; Plumber [46.39 h]; Equipment Opreator [46.39 h]; Water Truck [46.39 h]; HDPE (160mm Diameter) - PT - Depth: less than 1.5m [317.78 m]; HDPE (160mm Diameter) - PT - Depth: 1.51m - 2.5m [19.15 m]; HDPE (160mm Diameter) - PT - Depth: more than 2.5m [0.46 m] → Unskilled Labor [46.4 h]; Plumber [46.4 h]; Equipment Opreator [46.4 h]; Water Truck [46.4 h]; HDPE (160mm Diameter) - PT - Depth: less than 1.5m [317.78 m]; HDPE (160mm Diameter) - PT - Depth: 1.51m - 2.5m [19.15 m]; HDPE (160mm Diameter) - PT - Depth: more than 2.5m [0.46 m] |
| RHD4CZ9L02PT1501 | Backfilling and warning tape works for HDPE Pipline 160 mm - (RD-L-2)-Z9-L02-PT | 2027-02-08 → 2027-07-05 (+147d) | 2027-02-17 → 2027-07-14 (+147d) |  |  |
| 6478 | **RHD4-02-002-L02-(PT)-Wash out Valve Chambers** | 2027-01-12 → 2027-06-08 (+147d) | 2027-02-06 → 2027-07-03 (+147d) |  |  |
| RHD4CZ9L02PT2101 | Excavation and Bedding for Wash out Valve Chambers for Potable Water Network - (RD-L-2)-Z9-L02-PT | 2027-01-12 → 2027-06-08 (+147d) | 2027-01-13 → 2027-06-09 (+147d) |  |  |
| RHD4CZ9L02PT2201 | PC works for Wash out Valve Chambers for Potable Water Network - (RD-L-2)-Z9-L02-PT | 2027-01-14 → 2027-06-10 (+147d) | 2027-01-16 → 2027-06-12 (+147d) |  |  |
| RHD4CZ9L02PT2301 | Installation for Wash out Valve Chambers for Potable Water Network - (RD-L-2)-Z9-L02-PT | 2027-01-17 → 2027-06-13 (+147d) | 2027-01-18 → 2027-06-14 (+147d) |  |  |
| RHD4CZ9L02PT2401 | Backfilling works for Wash out Valve Chambers for Potable Water Network - (RD-L-2)-Z9-L02-PT | 2027-02-04 → 2027-07-01 (+147d) | 2027-02-06 → 2027-07-03 (+147d) |  |  |
| 6479 | **RHD4-02-002-L02-(PT)-Wash out Valves** | 2027-02-02 → 2027-06-29 (+147d) | 2027-02-08 → 2027-07-05 (+147d) |  |  |
| RHD4CZ9L02PT3102 | Installation for Wash out Valves for Potable Water Network - (RD-L-2)-Z9-L02-PT | 2027-02-02 → 2027-06-29 (+147d) | 2027-02-03 → 2027-06-30 (+147d) |  |  |
| RHD4CZ9L02PT3202 | Stem and Service box for Wash out Valves for Potable Water Network - (RD-L-2)-Z9-L02-PT | 2027-02-07 → 2027-07-04 (+147d) | 2027-02-08 → 2027-07-05 (+147d) |  |  |
| 6483 | **RHD4-02-002-L02-(PT)-Concrete Encasement** | 2027-02-02 → 2027-06-29 (+147d) | 2027-02-03 → 2027-06-30 (+147d) |  |  |
| RHD4CZ9L02PT5100 | Pipe Encasement for Potable Pipelines - (RD-L-2)-Z9-L02-PT | 2027-02-02 → 2027-06-29 (+147d) | 2027-02-03 → 2027-06-30 (+147d) |  | resources Skilled labor [0.76 h]; Unskilled Labor [0.76 h]; Equipment Opreator [0.76 h]; Concrete Mixer Truck [0.11 h]; Dump Truck [0.76 h]; Pipe Encasement - PT [0.34 m3] → Skilled labor [0.8 h]; Unskilled Labor [0.8 h]; Equipment Opreator [0.8 h]; Concrete Mixer Truck [0.11 h]; Dump Truck [0.8 h]; Pipe Encasement - PT [0.34 m3] |
| 8551 | **RHD4-02-002-L02-(PT)-HDPE Pipes - 110 mm diameter** | 2027-01-03 → 2027-05-30 (+147d) | 2027-02-11 → 2027-07-08 (+147d) |  |  |
| RHD4CZ9L02PT1100 | Excavation works for HDPE Pipline 110 mm - (RD-L-2)-Z9-L02-PT | 2027-01-03 → 2027-05-30 (+147d) | 2027-01-04 → 2027-05-31 (+147d) |  | resources Skilled labor [8.17 h]; Unskilled Labor [8.17 h]; Equipment Opreator [9.8 h]; Excavator-Poclain [8.17 h]; Dump Truck [1.63 h]; HDPE (110mm Diameter) - PT - Depth: less than 1.5m [18.84 m] → Skilled labor [8.17 h]; Unskilled Labor [8.17 h]; Equipment Opreator [9.8 h]; Excavator-Poclain [8.17 h]; Dump Truck [1.6 h]; HDPE (110mm Diameter) - PT - Depth: less than 1.5m [18.84 m] |
| RHD4CZ9L02PT1200 | Bedding works for HDPE Pipline 110 mm - (RD-L-2)-Z9-L02-PT | 2027-01-20 → 2027-06-16 (+147d) | 2027-01-21 → 2027-06-17 (+147d) |  |  |
| RHD4CZ9L02PT1300 | Installing for HDPE Pipline 110 mm - (RD-L-2)-Z9-L02-PT | 2027-01-23 → 2027-06-19 (+147d) | 2027-01-24 → 2027-06-20 (+147d) |  |  |
| RHD4CZ9L02PT1400 | Primary Test for HDPE Pipline 110 mm - (RD-L-2)-Z9-L02-PT | 2027-02-08 → 2027-07-05 (+147d) | 2027-02-09 → 2027-07-06 (+147d) |  |  |
| RHD4CZ9L02PT1500 | Backfilling and warning tape works for HDPE Pipline 110 mm - (RD-L-2)-Z9-L02-PT | 2027-02-10 → 2027-07-07 (+147d) | 2027-02-11 → 2027-07-08 (+147d) |  |  |
| 8556 | **RHD4-02-002-L02-(PT)-Gate Valves (Direct Buried)** | 2027-01-26 → 2027-06-22 (+147d) | 2027-02-08 → 2027-07-05 (+147d) |  |  |
| RHD4CZ9L02PT3100 | Installation for Direct Buried Gate Valves - (RD-L-2)-Z9-L02-PT | 2027-01-26 → 2027-06-22 (+147d) | 2027-02-01 → 2027-06-28 (+147d) |  |  |
| RHD4CZ9L02PT3200 | Stem and Service box for Direct Buried Gate Valves - (RD-L-2)-Z9-L02-PT | 2027-02-02 → 2027-06-29 (+147d) | 2027-02-08 → 2027-07-05 (+147d) |  |  |
| 8561 | **RHD4-02-002-L02-(PT)-Air Valve Chambers** | 2027-01-05 → 2027-06-01 (+147d) | 2027-01-13 → 2027-06-09 (+147d) |  |  |
| RHD4CZ9L02PT2102 | Excavation and Bedding for Air Valve Chambers for Potable Water Network - (RD-L-2)-Z9-L02-PT | 2027-01-05 → 2027-06-01 (+147d) | 2027-01-06 → 2027-06-02 (+147d) |  |  |
| RHD4CZ9L02PT2202 | PC works for Air Valve Chambers for Potable Water Network - (RD-L-2)-Z9-L02-PT | 2027-01-07 → 2027-06-03 (+147d) | 2027-01-09 → 2027-06-05 (+147d) |  |  |
| RHD4CZ9L02PT2302 | Installation for Air Valve Chambers for Potable Water Network - (RD-L-2)-Z9-L02-PT | 2027-01-10 → 2027-06-06 (+147d) | 2027-01-11 → 2027-06-07 (+147d) |  |  |
| RHD4CZ9L02PT2402 | Backfilling works for Air Valve Chambers for Potable Water Network - (RD-L-2)-Z9-L02-PT | 2027-01-12 → 2027-06-08 (+147d) | 2027-01-13 → 2027-06-09 (+147d) |  |  |
| 8562 | **RHD4-02-002-L02-(PT)-Air Valves** | 2027-01-12 → 2027-06-08 (+147d) | 2027-01-16 → 2027-06-12 (+147d) |  |  |
| RHD4CZ9L02PT3103 | Installation for Air Valves for Potable Water Network - (RD-L-2)-Z9-L02-PT | 2027-01-12 → 2027-06-08 (+147d) | 2027-01-13 → 2027-06-09 (+147d) |  |  |
| RHD4CZ9L02PT3203 | Stem and Service box for Air Valves for Potable Water Network - (RD-L-2)-Z9-L02-PT | 2027-01-14 → 2027-06-10 (+147d) | 2027-01-16 → 2027-06-12 (+147d) |  |  |
| 8563 | **RHD4-02-002-L02-(PT)-Fire Hydrant** | 2027-02-18 → 2027-07-15 (+147d) | 2027-04-06 → 2027-08-26 (+142d) |  |  |
| RHD4CZ9L02PT4100 | Excavation and Bedding and Pipe Installation for Fire Hydrant - (RD-L-2)-Z9-L02-PT | 2027-02-18 → 2027-07-15 (+147d) | 2027-03-03 → 2027-07-27 (+146d) |  |  |
| RHD4CZ9L02PT4200 | Valve Installation for Fire Hydrant - (RD-L-2)-Z9-L02-PT | 2027-03-04 → 2027-07-28 (+146d) | 2027-03-15 → 2027-08-04 (+142d) |  |  |
| RHD4CZ9L02PT4300 | Stem for Fire Hydrant - (RD-L-2)-Z9-L02-PT | 2027-03-16 → 2027-08-05 (+142d) | 2027-03-23 → 2027-08-12 (+142d) |  |  |
| RHD4CZ9L02PT4400 | Fire Installation for Fire Hydrant - (RD-L-2)-Z9-L02-PT | 2027-03-24 → 2027-08-14 (+143d) | 2027-03-31 → 2027-08-21 (+143d) |  |  |
| RHD4CZ9L02PT4500 | Protection Barriers for Fire Hydrant - (RD-L-2)-Z9-L02-PT | 2027-04-01 → 2027-08-22 (+143d) | 2027-04-06 → 2027-08-26 (+142d) |  |  |
| 8565 | **RHD4-02-002-Z9-L02-Irrigation Network - IRR** | 2027-01-12 → 2027-06-08 (+147d) | 2027-03-18 → 2027-10-11 (+207d) |  |  |
| 8566 | **RHD4-02-002-L02-(IRR)-HDPE Pipes - 160 mm diameter** | 2027-01-16 → 2027-06-12 (+147d) | 2027-03-18 → 2027-10-11 (+207d) |  |  |
| RHD4CZ9L02IRR1100 | Excavation works for HDPE Pipline 160 mm - (RD-L-2)-Z9-L02-IRR | 2027-01-16 → 2027-06-12 (+147d) | 2027-01-28 → 2027-06-24 (+147d) |  |  |
| RHD4CZ9L02IRR1200 | Bedding works for HDPE Pipline 160 mm - (RD-L-2)-Z9-L02-IRR | 2027-01-30 → 2027-06-26 (+147d) | 2027-02-08 → 2027-07-05 (+147d) |  |  |
| RHD4CZ9L02IRR1300 | Installing for HDPE Pipline 160 mm - (RD-L-2)-Z9-L02-IRR | 2027-02-09 → 2027-09-12 (+215d) | 2027-02-23 → 2027-09-26 (+215d) |  |  |
| RHD4CZ9L02IRR1400 | Primary Test for HDPE Pipline 160 mm - (RD-L-2)-Z9-L02-IRR | 2027-02-24 → 2027-09-27 (+215d) | 2027-02-28 → 2027-09-30 (+214d) |  |  |

| ID | Task | Start | Finish | Duration | Other |
| --- | --- | --- | --- | --- | --- |
| RHD4CZ9L02IRR1500 | Backfilling and warning tape works for HDPE Pipline 160 mm - (RD-L-2)-Z9-L02-IRR | 2027-03-01 → 2027-10-02 (+215d) | 2027-03-18 → 2027-10-11 (+207d) | 13d → 9d |  |
| 6116 | **RHD4-02-002-L02-(IRR)-Butterfly Valve Chamber** | 2027-01-16 → 2027-06-12 (+147d) | 2027-01-24 → 2027-06-20 (+147d) |  |  |
| RHD4CZ9L02IRR2100 | Excavation and Bedding for Butterfly Valve Chamber for Irrigation Network - (RD-L-2)-Z9-L02-IRR | 2027-01-16 → 2027-06-12 (+147d) | 2027-01-17 → 2027-06-13 (+147d) |  |  |
| RHD4CZ9L02IRR2200 | PC works for Butterfly Valve Chamber for Irrigation Network - (RD-L-2)-Z9-L02-IRR | 2027-01-18 → 2027-06-14 (+147d) | 2027-01-19 → 2027-06-15 (+147d) |  |  |
| RHD4CZ9L02IRR2300 | Installation for Butterfly Valve Chamber for Irrigation Network - (RD-L-2)-Z9-L02-IRR | 2027-01-20 → 2027-06-16 (+147d) | 2027-01-21 → 2027-06-17 (+147d) |  |  |
| RHD4CZ9L02IRR2400 | Backfilling works for Butterfly Valve Chamber for Irrigation Network - (RD-L-2)-Z9-L02-IRR | 2027-01-23 → 2027-06-19 (+147d) | 2027-01-24 → 2027-06-20 (+147d) |  |  |
| 8573 | **RHD4-02-002-L02-(IRR)-HDPE Pipes - 500 mm diameter** | 2027-01-12 → 2027-06-08 (+147d) | 2027-01-25 → 2027-06-21 (+147d) |  |  |
| RHD4CZ9L02IRR1107 | Excavation works for HDPE Pipline 500 mm - (RD-L-2)-Z9-L02-IRR | 2027-01-12 → 2027-06-08 (+147d) | 2027-01-14 → 2027-06-10 (+147d) |  | resources Skilled labor [22.43 h]; Unskilled Labor [22.43 h]; Equipment Opreator [26.9 h]; Excavator-Poclain [22.43 h]; Dump Truck [4.47 h]; HDPE (500mm Diameter) - TSE - Depth: less than 1.5m [28.11 m]; HDPE (500mm Diameter) - TSE - Depth: more than 1.51m [4.23 m] → Skilled labor [22.4 h]; Unskilled Labor [22.4 h]; Equipment Opreator [26.9 h]; Excavator-Poclain [22.4 h]; Dump Truck [4.47 h]; HDPE (500mm Diameter) - TSE - Depth: less than 1.5m [28.11 m]; HDPE (500mm Diameter) - TSE - Depth: more than 1.51m [4.23 m] |
| RHD4CZ9L02IRR1207 | Bedding works for HDPE Pipline 500 mm - (RD-L-2)-Z9-L02-IRR | 2027-01-16 → 2027-06-12 (+147d) | 2027-01-17 → 2027-06-13 (+147d) |  |  |
| RHD4CZ9L02IRR1307 | Installing for HDPE Pipline 500 mm - (RD-L-2)-Z9-L02-IRR | 2027-01-18 → 2027-06-14 (+147d) | 2027-01-20 → 2027-06-16 (+147d) |  | resources Unskilled Labor [44.87 h]; Plumber [22.43 h]; Equipment Opreator [22.43 h]; Boom Truck [22.43 h]; HDPE (500mm Diameter) - TSE - Depth: less than 1.5m [126.48 m]; HDPE (500mm Diameter) - TSE - Depth: more than 1.51m [11.28 m] → Unskilled Labor [44.87 h]; Plumber [22.4 h]; Equipment Opreator [22.4 h]; Boom Truck [22.4 h]; HDPE (500mm Diameter) - TSE - Depth: less than 1.5m [126.48 m]; HDPE (500mm Diameter) - TSE - Depth: more than 1.51m [11.28 m] |
| RHD4CZ9L02IRR1407 | Primary Test for HDPE Pipline 500 mm - (RD-L-2)-Z9-L02-IRR | 2027-01-21 → 2027-06-17 (+147d) | 2027-01-23 → 2027-06-19 (+147d) |  | resources Unskilled Labor [7.19 h]; Plumber [7.19 h]; Equipment Opreator [7.19 h]; Water Truck [7.19 h]; HDPE (500mm Diameter) - TSE - Depth: less than 1.5m [56.21 m]; HDPE (500mm Diameter) - TSE - Depth: more than 1.51m [5.64 m] → Unskilled Labor [7.2 h]; Plumber [7.2 h]; Equipment Opreator [7.2 h]; Water Truck [7.2 h]; HDPE (500mm Diameter) - TSE - Depth: less than 1.5m [56.21 m]; HDPE (500mm Diameter) - TSE - Depth: more than 1.51m [5.64 m] |
| RHD4CZ9L02IRR1507 | Backfilling and warning tape works for HDPE Pipline 500 mm - (RD-L-2)-Z9-L02-IRR | 2027-01-24 → 2027-06-20 (+147d) | 2027-01-25 → 2027-06-21 (+147d) |  |  |
| 8574 | **RHD4-02-002-L02-(IRR)-Gate Valves (Direct Buried)** | 2027-02-15 → 2027-09-18 (+215d) | 2027-03-03 → 2027-10-04 (+215d) |  |  |
| RHD4CZ9L02IRR3100 | Installation for Direct Buried Gate Valves - (RD-L-2)-Z9-L02-IRR | 2027-02-15 → 2027-09-18 (+215d) | 2027-02-23 → 2027-09-26 (+215d) |  |  |
| RHD4CZ9L02IRR3200 | Stem and Service box for Direct Buried Gate Valves - (RD-L-2)-Z9-L02-IRR | 2027-02-24 → 2027-09-27 (+215d) | 2027-03-03 → 2027-10-04 (+215d) |  |  |
| 8577 | **RHD4-02-002-L02-(IRR)-Wash out Chamber** | 2027-01-30 → 2027-06-26 (+147d) | 2027-02-11 → 2027-07-08 (+147d) |  |  |
| RHD4CZ9L02IRR2101 | Excavation and Bedding for Wash out Chamber for Irrigation Network - (RD-L-2)-Z9-L02-IRR | 2027-01-30 → 2027-06-26 (+147d) | 2027-02-01 → 2027-06-28 (+147d) |  | resources Skilled labor [27.23 h]; Unskilled Labor [27.23 h]; Equipment Opreator [5.45 h]; Excavator-Poclain [2.72 h]; Dump Truck [2.72 h]; Wash out chambers - TSE [1.25 nr] → Skilled labor [27.2 h]; Unskilled Labor [27.2 h]; Equipment Opreator [5.45 h]; Excavator-Poclain [2.72 h]; Dump Truck [2.72 h]; Wash out chambers - TSE [1.25 nr] |
| RHD4CZ9L02IRR2201 | PC works for Wash out Chamber for Irrigation Network - (RD-L-2)-Z9-L02-IRR | 2027-02-02 → 2027-06-29 (+147d) | 2027-02-04 → 2027-07-01 (+147d) |  | resources Skilled labor [27.23 h]; Unskilled Labor [54.45 h]; Equipment Opreator [2.72 h]; Concrete Pump [2.72 h]; Wash out chambers - TSE [0.5 nr] → Skilled labor [27.2 h]; Unskilled Labor [54.45 h]; Equipment Opreator [2.72 h]; Concrete Pump [2.72 h]; Wash out chambers - TSE [0.5 nr] |
| RHD4CZ9L02IRR2301 | Installation for Wash out Chamber for Irrigation Network - (RD-L-2)-Z9-L02-IRR | 2027-02-06 → 2027-07-03 (+147d) | 2027-02-08 → 2027-07-05 (+147d) |  | resources Skilled labor [27.23 h]; Unskilled Labor [54.45 h]; Equipment Opreator [5.45 h]; Boom Truck [5.45 h]; Wash out chambers - TSE [2.75 nr] → Skilled labor [27.2 h]; Unskilled Labor [54.45 h]; Equipment Opreator [5.45 h]; Boom Truck [5.45 h]; Wash out chambers - TSE [2.75 nr] |
| RHD4CZ9L02IRR2401 | Backfilling works for Wash out Chamber for Irrigation Network - (RD-L-2)-Z9-L02-IRR | 2027-02-09 → 2027-07-06 (+147d) | 2027-02-11 → 2027-07-08 (+147d) |  | resources Skilled labor [27.23 h]; Unskilled Labor [54.45 h]; Equipment Opreator [5.45 h]; Water Truck [2.72 h]; Dump Truck [2.72 h]; Wash out chambers - TSE [0.5 nr] → Skilled labor [27.2 h]; Unskilled Labor [54.45 h]; Equipment Opreator [5.45 h]; Water Truck [2.72 h]; Dump Truck [2.72 h]; Wash out chambers - TSE [0.5 nr] |
| 8578 | **RHD4-02-002-L02-(IRR)-Wash out Valves** | 2027-01-16 → 2027-06-12 (+147d) | 2027-01-21 → 2027-06-17 (+147d) |  |  |
| RHD4CZ9L02IRR3102 | Installation for Wash out Valve for Irrigation Network - (RD-L-2)-Z9-L02-IRR | 2027-01-16 → 2027-06-12 (+147d) | 2027-01-18 → 2027-06-14 (+147d) |  | resources Unskilled Labor [27.23 h]; Plumber [27.23 h]; Wash out valve diameter 100 mm - TSE [3.6 nr]; Wash out valve diameter 150 mm - TSE [0.9 nr] → Unskilled Labor [27.2 h]; Plumber [27.2 h]; Wash out valve diameter 100 mm - TSE [3.6 nr]; Wash out valve diameter 150 mm - TSE [0.9 nr] |
| RHD4CZ9L02IRR3202 | Stem and Service box for Wash out Valve for Irrigation Network - (RD-L-2)-Z9-L02-IRR | 2027-01-19 → 2027-06-15 (+147d) | 2027-01-21 → 2027-06-17 (+147d) |  | resources Unskilled Labor [27.23 h]; Plumber [27.23 h]; Wash out valve diameter 100 mm - TSE [0.4 nr]; Wash out valve diameter 150 mm - TSE [0.1 nr] → Unskilled Labor [27.2 h]; Plumber [27.2 h]; Wash out valve diameter 100 mm - TSE [0.4 nr]; Wash out valve diameter 150 mm - TSE [0.1 nr] |
| 8579 | **RHD4-02-002-L02-(IRR)-Air Valve Chamber** | 2027-01-30 → 2027-06-26 (+147d) | 2027-02-07 → 2027-07-04 (+147d) |  |  |
| RHD4CZ9L02IRR2102 | Excavation and Bedding for Valve Chamber for Irrigation Network - (RD-L-2)-Z9-L02-IRR | 2027-01-30 → 2027-06-26 (+147d) | 2027-01-31 → 2027-06-27 (+147d) |  | resources Skilled labor [16.34 h]; Unskilled Labor [16.34 h]; Equipment Opreator [3.27 h]; Excavator-Poclain [1.63 h]; Dump Truck [1.63 h]; Air Valve chambers - TSE [0.75 nr] → Skilled labor [16.34 h]; Unskilled Labor [16.34 h]; Equipment Opreator [3.27 h]; Excavator-Poclain [1.6 h]; Dump Truck [1.6 h]; Air Valve chambers - TSE [0.75 nr] |
| RHD4CZ9L02IRR2202 | PC works for Valve Chamber for Irrigation Network - (RD-L-2)-Z9-L02-IRR | 2027-02-01 → 2027-06-28 (+147d) | 2027-02-02 → 2027-06-29 (+147d) |  | resources Skilled labor [16.34 h]; Unskilled Labor [32.67 h]; Equipment Opreator [1.63 h]; Concrete Pump [1.63 h]; Air Valve chambers - TSE [0.3 nr] → Skilled labor [16.34 h]; Unskilled Labor [32.67 h]; Equipment Opreator [1.6 h]; Concrete Pump [1.6 h]; Air Valve chambers - TSE [0.3 nr] |
| RHD4CZ9L02IRR2302 | Installation for Valve Chamber for Irrigation Network - (RD-L-2)-Z9-L02-IRR | 2027-02-03 → 2027-06-30 (+147d) | 2027-02-04 → 2027-07-01 (+147d) |  |  |
| RHD4CZ9L02IRR2402 | Backfilling works for Valve Chamber for Irrigation Network - (RD-L-2)-Z9-L02-IRR | 2027-02-06 → 2027-07-03 (+147d) | 2027-02-07 → 2027-07-04 (+147d) |  | resources Skilled labor [16.34 h]; Unskilled Labor [32.67 h]; Equipment Opreator [3.27 h]; Water Truck [1.63 h]; Dump Truck [1.63 h]; Air Valve chambers - TSE [0.3 nr] → Skilled labor [16.34 h]; Unskilled Labor [32.67 h]; Equipment Opreator [3.27 h]; Water Truck [1.6 h]; Dump Truck [1.6 h]; Air Valve chambers - TSE [0.3 nr] |
| 8580 | **RHD4-02-002-L02-(IRR)-Air Valves** | 2027-01-16 → 2027-06-12 (+147d) | 2027-02-09 → 2027-07-06 (+147d) |  |  |
| RHD4CZ9L02IRR3103 | Installation for Air Valves for Irrigation Network - (RD-L-2)-Z9-L02-IRR | 2027-01-16 → 2027-06-12 (+147d) | 2027-01-17 → 2027-06-13 (+147d) |  |  |
| RHD4CZ9L02IRR3203 | Stem and Service box for Air Valves for Irrigation Network - (RD-L-2)-Z9-L02-IRR | 2027-02-08 → 2027-07-05 (+147d) | 2027-02-09 → 2027-07-06 (+147d) |  |  |
| 6117 | **RHD4-02-002-L02-(IRR)-Butterfly Valves** | 2027-01-20 → 2027-06-16 (+147d) | 2027-01-24 → 2027-06-20 (+147d) |  |  |
| RHD4CZ9L02IRR3101 | Installation for Butterfly Valves for Irrigation Network - (RD-L-2)-Z9-L02-IRR | 2027-01-20 → 2027-06-16 (+147d) | 2027-01-21 → 2027-06-17 (+147d) |  |  |
| RHD4CZ9L02IRR3201 | Stem and Service box for Butterfly Valves for Irrigation Network - (RD-L-2)-Z9-L02-IRR | 2027-01-23 → 2027-06-19 (+147d) | 2027-01-24 → 2027-06-20 (+147d) |  |  |
| 8599 | **RHD4-02-002-Z9-L02-Medium Voltage Network - MV** | 2027-02-03 → 2027-07-14 (+161d) | 2027-04-05 → 2027-09-08 (+156d) |  |  |
| 8600 | **RHD4-02-002-L02-(MV)-Medium Voltage cable trench** | 2027-02-03 → 2027-07-14 (+161d) | 2027-03-28 → 2027-08-31 (+156d) |  |  |
| RHD4CZ9L02MV1100 | Excavation for Medium Voltage Trench - (RD-L-2)-Z9-L02-MV | 2027-02-03 → 2027-07-14 (+161d) | 2027-02-13 → 2027-07-24 (+161d) |  |  |
| RHD4CZ9L02MV1200 | Trench Backfilling for Medium Voltage Network - (RD-L-2)-Z9-L02-MV | 2027-03-18 → 2027-08-22 (+157d) | 2027-03-28 → 2027-08-31 (+156d) |  |  |
| 8601 | **RHD4-02-002-L02-(MV)-Medium Voltage duct banks** | 2027-02-14 → 2027-07-25 (+161d) | 2027-03-14 → 2027-08-17 (+156d) |  |  |
| RHD4CZ9L02MV2100 | Excavation of Duct Banks for Medium Voltage Network - (RD-L-2)-Z9-L02-MV | 2027-02-14 → 2027-07-25 (+161d) | 2027-02-18 → 2027-07-29 (+161d) |  |  |
| RHD4CZ9L02MV2200 | Installation of Duct Banks for Medium Voltage Network - (RD-L-2)-Z9-L02-MV | 2027-02-20 → 2027-07-31 (+161d) | 2027-02-28 → 2027-08-07 (+160d) |  |  |
| RHD4CZ9L02MV2300 | Pouring of Duct Banks for Medium Voltage Network - (RD-L-2)-Z9-L02-MV | 2027-03-01 → 2027-08-08 (+160d) | 2027-03-06 → 2027-08-12 (+159d) |  |  |
| RHD4CZ9L02MV2400 | Backfilling of Duct Banks for Medium Voltage Network - (RD-L-2)-Z9-L02-MV | 2027-03-07 → 2027-08-14 (+160d) | 2027-03-14 → 2027-08-17 (+156d) |  |  |
| 8602 | **RHD4-02-002-L02-(MV)-Medium Voltage cables 3Cx 500 mm²** | 2027-02-14 → 2027-07-25 (+161d) | 2027-03-17 → 2027-08-21 (+157d) |  |  |
| RHD4CZ9L02MV3100 | Installation of Medium Voltage Cables 3Cx 500 mm² - (RD-L-2)-Z9-L02-MV | 2027-02-14 → 2027-07-25 (+161d) | 2027-02-24 → 2027-08-03 (+160d) |  |  |
| RHD4CZ9L02MV3200 | Joints Installation of Medium Voltage Cables 3Cx 500 mm² - (RD-L-2)-Z9-L02-MV | 2027-02-25 → 2027-08-04 (+160d) | 2027-03-01 → 2027-08-08 (+160d) |  |  |
| RHD4CZ9L02MV3300 | Testing of Medium Voltage Cables 3Cx 500 mm² - (RD-L-2)-Z9-L02-MV | 2027-03-02 → 2027-08-09 (+160d) | 2027-03-15 → 2027-08-18 (+156d) |  |  |
| RHD4CZ9L02MV3400 | Termination of Medium Voltage Cables 3Cx 500 mm² - (RD-L-2)-Z9-L02-MV | 2027-03-16 → 2027-08-19 (+156d) | 2027-03-17 → 2027-08-21 (+157d) |  |  |
| 8603 | **RHD4-02-002-L02-(MV)-Medium Voltage cables 3Cx 50 mm²** | 2027-02-14 → 2027-07-25 (+161d) | 2027-02-21 → 2027-08-01 (+161d) |  |  |
| RHD4CZ9L02MV3101 | Installation of Medium Voltage Cables 3Cx 50 mm² - (RD-L-2)-Z9-L02-MV | 2027-02-14 → 2027-07-25 (+161d) | 2027-02-15 → 2027-07-26 (+161d) |  |  |
| RHD4CZ9L02MV3301 | Testing of Medium Voltage Cables 3Cx 50 mm² - (RD-L-2)-Z9-L02-MV | 2027-02-16 → 2027-07-27 (+161d) | 2027-02-17 → 2027-07-28 (+161d) |  |  |
| RHD4CZ9L02MV3401 | Termination of Medium Voltage Cables 3Cx 50 mm² - (RD-L-2)-Z9-L02-MV | 2027-02-18 → 2027-07-29 (+161d) | 2027-02-21 → 2027-08-01 (+161d) |  |  |
| 8604 | **RHD4-02-002-L02-(MV)-Normally open Point (Outdoor Type)** | 2027-03-29 → 2027-09-01 (+156d) | 2027-04-01 → 2027-09-05 (+157d) |  |  |
| RHD4CZ9L02MV4100 | Installation for Normally open Point - (RD-L-2)-Z9-L02-MV | 2027-03-29 → 2027-09-01 (+156d) | 2027-03-30 → 2027-09-02 (+156d) |  |  |
| RHD4CZ9L02MV4200 | Termination for Normally open Point - (RD-L-2)-Z9-L02-MV | 2027-03-31 → 2027-09-04 (+157d) | 2027-04-01 → 2027-09-05 (+157d) |  |  |
| 8605 | **RHD4-02-002-L02-(MV)-Unit Substations** | 2027-02-23 → 2027-08-02 (+160d) | 2027-04-05 → 2027-09-08 (+156d) |  |  |
| RHD4CZ9L02MV5100 | Excavation for Unit Substations for Medium Voltage Network - (RD-L-2)-Z9-L02-MV | 2027-02-23 → 2027-08-02 (+160d) | 2027-02-28 → 2027-08-07 (+160d) |  |  |
| RHD4CZ9L02MV5200 | Concrete Base Placement for Unit Substations for Medium Voltage Network - (RD-L-2)-Z9-L02-MV | 2027-03-01 → 2027-08-08 (+160d) | 2027-03-06 → 2027-08-12 (+159d) |  |  |
| RHD4CZ9L02MV5300 | Installation for Fences and doors for Medium Voltage Network - (RD-L-2)-Z9-L02-MV | 2027-03-07 → 2027-08-14 (+160d) | 2027-03-24 → 2027-08-28 (+157d) |  | resources Skilled labor [136.13 h]; Unskilled Labor [136.13 h]; Equipment Opreator [163.36 h]; Excavator-Poclain [27.23 h]; Boom Truck [136.13 h]; Unit Substation 13.8/0.4 K V, 500kVA ,Including concrete foundations and fencing, According to the specifications and standards of SEC [0.1 Unit]; Unit Substation 13.8/0.4 K V, 1000kVA ,Including concrete foundations and fencing, According to the specifications and standards of SEC [0.1 Unit]; Ring Main Unit RMU, 13.8KV, According to the specifications and standards of SEC [0.3 Unit] → Skilled labor [136.13 h]; Unskilled Labor [136.13 h]; Equipment Opreator [163.36 h]; Excavator-Poclain [27.2 h]; Boom Truck [136.13 h]; Unit Substation 13.8/0.4 K V, 500kVA ,Including concrete foundations and fencing, According to the specifications and standards of SEC [0.1 Unit]; Unit Substation 13.8/0.4 K V, 1000kVA ,Including concrete foundations and fencing, According to the specifications and standards of SEC [0.1 Unit]; Ring Main Unit RMU, 13.8KV, According to the specifications and standards of SEC [0.3 Unit] |
| RHD4CZ9L02MV5400 | Installation for Unit Substations for Medium Voltage Network - (RD-L-2)-Z9-L02-MV | 2027-03-25 → 2027-08-29 (+157d) | 2027-04-05 → 2027-09-08 (+156d) |  |  |
| 8606 | **RHD4-02-002-Z9-L02-Low Voltage Network - LV** | 2027-01-14 → 2027-06-10 (+147d) | 2027-03-06 → 2027-07-29 (+145d) |  |  |
| 8607 | **RHD4-02-002-L02-(LV)-Low Voltage duct banks** | 2027-01-14 → 2027-06-10 (+147d) | 2027-02-07 → 2027-07-04 (+147d) |  |  |
| RHD4CZ9L02LV2100 | Excavation of Duct Banks for Low Voltage Network - (RD-L-2)-Z9-L02-LV | 2027-01-14 → 2027-06-10 (+147d) | 2027-01-19 → 2027-06-15 (+147d) |  |  |
| RHD4CZ9L02LV2200 | Installation of Duct Banks for Low Voltage Network - (RD-L-2)-Z9-L02-LV | 2027-01-20 → 2027-06-16 (+147d) | 2027-01-27 → 2027-06-23 (+147d) |  |  |
| RHD4CZ9L02LV2300 | Pouring of Duct Banks for Low Voltage Network - (RD-L-2)-Z9-L02-LV | 2027-01-28 → 2027-06-24 (+147d) | 2027-02-02 → 2027-06-29 (+147d) |  |  |
| RHD4CZ9L02LV2400 | Backfilling of Duct Banks for Low Voltage Network - (RD-L-2)-Z9-L02-LV | 2027-02-03 → 2027-06-30 (+147d) | 2027-02-07 → 2027-07-04 (+147d) |  |  |
| 8608 | **RHD4-02-002-L02-(LV)-Low Voltage Drawpit** | 2027-02-03 → 2027-06-30 (+147d) | 2027-02-07 → 2027-07-04 (+147d) |  |  |
| RHD4CZ9L02LV5100 | Excavation of Drawpit size 900x900x1000mm for Low Voltage Network - (RD-L-2)-Z9-L02-LV | 2027-02-03 → 2027-06-30 (+147d) | 2027-02-04 → 2027-07-01 (+147d) |  |  |
| RHD4CZ9L02LV5200 | Installation of Drawpit size 900x900x1000mm for Low Voltage Network - (RD-L-2)-Z9-L02-LV | 2027-02-06 → 2027-07-03 (+147d) | 2027-02-07 → 2027-07-04 (+147d) |  |  |
| 8609 | **RHD4-02-002-L02-(LV)-Low Voltage cables** | 2027-02-08 → 2027-07-05 (+147d) | 2027-02-24 → 2027-07-20 (+146d) |  |  |

| ID | Task | Start | Finish | Duration | Other |
| --- | --- | --- | --- | --- | --- |
| RHD4CZ9L02LV3100 | Excavation for Low Voltage Cables for Low Voltage Network - (RD-L-2)-Z9-L02-LV | 2027-02-08 → 2027-07-05 (+147d) | 2027-02-11 → 2027-07-08 (+147d) |  | resources Skilled labor [39.21 h]; Unskilled Labor [78.41 h]; Equipment Opreator [78.41 h]; Excavator-Poclain [39.21 h]; Boom Truck [39.21 h]; Cable, Copper 4x300mm2/ CU/XLPE/PVC [17.68 m]; Cable, Copper 4x185mm2/ CU/XLPE/PVC [13.27 m]; Cable, Copper 4x70mm2/ CU/XLPE/PVC [34.8 m]; Cable, Copper 4x50mm2/ CU/XLPE/PVC +1x25mm2 CU/PVC [2.23 m]; Cable, Copper 3x10mm2/ CU/XLPE/SWA/PVC [112.08 m] → Skilled labor [39.2 h]; Unskilled Labor [78.4 h]; Equipment Opreator [78.4 h]; Excavator-Poclain [39.2 h]; Boom Truck [39.2 h]; Cable, Copper 4x300mm2/ CU/XLPE/PVC [17.68 m]; Cable, Copper 4x185mm2/ CU/XLPE/PVC [13.27 m]; Cable, Copper 4x70mm2/ CU/XLPE/PVC [34.8 m]; Cable, Copper 4x50mm2/ CU/XLPE/PVC +1x25mm2 CU/PVC [2.23 m]; Cable, Copper 3x10mm2/ CU/XLPE/SWA/PVC [112.08 m] |
| RHD4CZ9L02LV3200 | Cable Laying of Low Voltage Cables for Low Voltage Network - (RD-L-2)-Z9-L02-LV | 2027-02-13 → 2027-07-10 (+147d) | 2027-02-16 → 2027-07-13 (+147d) |  |  |
| RHD4CZ9L02LV3300 | Warning tape and Backfill for Low Voltage Cables for Low Voltage Network - (RD-L-2)-Z9-L02-LV | 2027-02-17 → 2027-07-14 (+147d) | 2027-02-21 → 2027-07-18 (+147d) |  |  |
| RHD4CZ9L02LV3400 | Testing of Low Voltage Cables for Low Voltage Network - (RD-L-2)-Z9-L02-LV | 2027-02-23 → 2027-07-19 (+146d) | 2027-02-24 → 2027-07-20 (+146d) |  | resources Skilled labor [19.6 h]; Unskilled Labor [78.41 h]; Electrician [39.21 h]; Equipment Opreator [19.6 h]; Boom Truck [19.6 h]; Cable, Copper 4x300mm2/ CU/XLPE/PVC [4.42 m]; Cable, Copper 4x185mm2/ CU/XLPE/PVC [3.32 m]; Cable, Copper 4x70mm2/ CU/XLPE/PVC [8.7 m]; Cable, Copper 4x50mm2/ CU/XLPE/PVC +1x25mm2 CU/PVC [0.56 m]; Cable, Copper 3x10mm2/ CU/XLPE/SWA/PVC [28.02 m] → Skilled labor [19.6 h]; Unskilled Labor [78.4 h]; Electrician [39.2 h]; Equipment Opreator [19.6 h]; Boom Truck [19.6 h]; Cable, Copper 4x300mm2/ CU/XLPE/PVC [4.42 m]; Cable, Copper 4x185mm2/ CU/XLPE/PVC [3.32 m]; Cable, Copper 4x70mm2/ CU/XLPE/PVC [8.7 m]; Cable, Copper 4x50mm2/ CU/XLPE/PVC +1x25mm2 CU/PVC [0.56 m]; Cable, Copper 3x10mm2/ CU/XLPE/SWA/PVC [28.02 m] |
| 8610 | **RHD4-02-002-L02-(LV)-Low Voltage Distribution Pillars** | 2027-02-25 → 2027-07-21 (+146d) | 2027-03-06 → 2027-07-29 (+145d) |  |  |
| RHD4CZ9L02LV4100 | Leveling for Distribution Pillars for Low Voltage Network - (RD-L-2)-Z9-L02-LV | 2027-02-25 → 2027-07-21 (+146d) | 2027-02-28 → 2027-07-24 (+146d) |  | resources Skilled labor [27.23 h]; Unskilled Labor [54.45 h]; Equipment Opreator [10.89 h]; Excavator-Poclain [5.45 h]; Boom Truck [5.45 h]; 0.6/1 KV Low Voltage Distribution Pillars with main breaker MCCB type and 5 Outgoing feeders MCCB type [0.15 Unit]; 0.6/1 KV Low Voltage Distribution Panels for Industrial UPS - Cameras [0.15 Unit]; Supply and installation of KWH meter mounting frame including concrete block wall for installation of KWH meter according to the standards and specifications of SEC [0.45 Unit] → Skilled labor [27.2 h]; Unskilled Labor [54.45 h]; Equipment Opreator [10.89 h]; Excavator-Poclain [5.45 h]; Boom Truck [5.45 h]; 0.6/1 KV Low Voltage Distribution Pillars with main breaker MCCB type and 5 Outgoing feeders MCCB type [0.15 Unit]; 0.6/1 KV Low Voltage Distribution Panels for Industrial UPS - Cameras [0.15 Unit]; Supply and installation of KWH meter mounting frame including concrete block wall for installation of KWH meter according to the standards and specifications of SEC [0.45 Unit] |
| RHD4CZ9L02LV4200 | Lean Concrete for Distribution Pillars for Low Voltage Network - (RD-L-2)-Z9-L02-LV | 2027-03-01 → 2027-07-25 (+146d) | 2027-03-02 → 2027-07-26 (+146d) |  |  |
| RHD4CZ9L02LV4300 | Installation of Distribution Pillars for Low Voltage Network - (RD-L-2)-Z9-L02-LV | 2027-03-03 → 2027-07-27 (+146d) | 2027-03-06 → 2027-07-29 (+145d) |  | resources Skilled labor [27.23 h]; Unskilled Labor [108.9 h]; Electrician [54.45 h]; Equipment Opreator [27.23 h]; Boom Truck [27.23 h]; 0.6/1 KV Low Voltage Distribution Pillars with main breaker MCCB type and 5 Outgoing feeders MCCB type [0.6 Unit]; 0.6/1 KV Low Voltage Distribution Panels for Industrial UPS - Cameras [0.6 Unit]; Supply and installation of KWH meter mounting frame including concrete block wall for installation of KWH meter according to the standards and specifications of SEC [1.8 Unit] → Skilled labor [27.2 h]; Unskilled Labor [108.9 h]; Electrician [54.45 h]; Equipment Opreator [27.2 h]; Boom Truck [27.2 h]; 0.6/1 KV Low Voltage Distribution Pillars with main breaker MCCB type and 5 Outgoing feeders MCCB type [0.6 Unit]; 0.6/1 KV Low Voltage Distribution Panels for Industrial UPS - Cameras [0.6 Unit]; Supply and installation of KWH meter mounting frame including concrete block wall for installation of KWH meter according to the standards and specifications of SEC [1.8 Unit] |
| 8612 | **RHD4-02-002-Z9-L02-Street Lighting Network - SL** | 2027-01-20 → 2027-06-16 (+147d) | 2027-07-06 → 2027-12-01 (+148d) |  |  |
| 8613 | **RHD4-02-002-L02-(SL)-Street Lighting duct banks** | 2027-01-20 → 2027-06-16 (+147d) | 2027-03-01 → 2027-07-25 (+146d) |  |  |
| RHD4CZ9L02SL2100 | Excavation of Duct Banks for Street Lighting Network - (RD-L-2)-Z9-L02-SL | 2027-01-20 → 2027-06-16 (+147d) | 2027-01-28 → 2027-06-24 (+147d) |  |  |
| RHD4CZ9L02SL2200 | Installation of Duct Banks for Street Lighting Network - (RD-L-2)-Z9-L02-SL | 2027-01-30 → 2027-06-26 (+147d) | 2027-02-11 → 2027-07-08 (+147d) |  |  |
| RHD4CZ9L02SL2300 | Pouring of Duct Banks for Street Lighting Network - (RD-L-2)-Z9-L02-SL | 2027-02-13 → 2027-07-10 (+147d) | 2027-02-21 → 2027-07-18 (+147d) |  |  |
| RHD4CZ9L02SL2400 | Backfilling of Duct Banks for Street Lighting Network - (RD-L-2)-Z9-L02-SL | 2027-02-23 → 2027-07-19 (+146d) | 2027-03-01 → 2027-07-25 (+146d) |  |  |
| 8614 | **RHD4-02-002-L02-(SL)-Street Lighting Drawpit** | 2027-03-07 → 2027-07-31 (+146d) | 2027-03-14 → 2027-08-03 (+142d) |  |  |
| RHD4CZ9L02SL5100 | Excavation of Drawpit size 600x600x900mm for Street Lighting Network - (RD-L-2)-Z9-L02-SL | 2027-03-07 → 2027-07-31 (+146d) | 2027-03-08 → 2027-08-01 (+146d) |  |  |
| RHD4CZ9L02SL5200 | Installation of Drawpit size 600x600x900mm for Street Lighting Network - (RD-L-2)-Z9-L02-SL | 2027-03-13 → 2027-08-02 (+142d) | 2027-03-14 → 2027-08-03 (+142d) |  |  |
| 8615 | **RHD4-02-002-L02-(SL)-Street Lighting cables** | 2027-03-15 → 2027-08-04 (+142d) | 2027-05-02 → 2027-10-02 (+153d) |  |  |
| RHD4CZ9L02SL3100 | Excavation for Street Lighting Cables for Street Lighting Network - (RD-L-2)-Z9-L02-SL | 2027-03-15 → 2027-08-04 (+142d) | 2027-03-23 → 2027-08-22 (+152d) | 8d → 16d |  |
| RHD4CZ9L02SL3200 | Cable Laying of Street Lighting Cables for Street Lighting Network - (RD-L-2)-Z9-L02-SL | 2027-03-24 → 2027-08-23 (+152d) | 2027-04-07 → 2027-09-06 (+152d) |  |  |
| RHD4CZ9L02SL3300 | Warning tape and Backfill for Street Lighting Cables for Street Lighting Network - (RD-L-2)-Z9-L02-SL | 2027-04-08 → 2027-09-07 (+152d) | 2027-04-22 → 2027-09-21 (+152d) |  |  |
| RHD4CZ9L02SL3400 | Testing of Street Lighting Cables for Street Lighting Network - (RD-L-2)-Z9-L02-SL | 2027-04-24 → 2027-09-22 (+151d) | 2027-05-02 → 2027-10-02 (+153d) |  |  |
| 8616 | **RHD4-02-002-L02-(SL)-Street Lighting Poles** | 2027-05-03 → 2027-10-03 (+153d) | 2027-06-27 → 2027-11-22 (+148d) |  |  |
| RHD4CZ9L02SL1100 | Excavation for RC Base for Lighting Poles for Street Lighting Network - (RD-L-2)-Z9-L02-SL | 2027-05-03 → 2027-10-03 (+153d) | 2027-05-11 → 2027-10-11 (+153d) |  |  |
| RHD4CZ9L02SL1200 | Installation for RC Base for Lighting Poles for Street Lighting Network - (RD-L-2)-Z9-L02-SL | 2027-05-12 → 2027-10-12 (+153d) | 2027-05-25 → 2027-10-20 (+148d) |  |  |
| RHD4CZ9L02SL1300 | Backfill for RC Base for Lighting Poles for Street Lighting Network - (RD-L-2)-Z9-L02-SL | 2027-05-26 → 2027-10-21 (+148d) | 2027-06-03 → 2027-10-30 (+149d) |  |  |
| RHD4CZ9L02SL1400 | Installation for Lighting Poles for Street Lighting Network - (RD-L-2)-Z9-L02-SL | 2027-06-05 → 2027-10-31 (+148d) | 2027-06-17 → 2027-11-13 (+149d) |  |  |
| RHD4CZ9L02SL1500 | Luminaire Installation for Lighting Poles for Street Lighting Network - (RD-L-2)-Z9-L02-SL | 2027-06-19 → 2027-11-14 (+148d) | 2027-06-27 → 2027-11-22 (+148d) |  |  |
| 8617 | **RHD4-02-002-L02-(SL)-Street Lighting Feeder Pillars** | 2027-06-28 → 2027-11-23 (+148d) | 2027-07-04 → 2027-11-29 (+148d) |  |  |
| RHD4CZ9L02SL4100 | Leveling for Distribution Pillars for Street Lighting Network - (RD-L-2)-Z9-L02-SL | 2027-06-28 → 2027-11-23 (+148d) | 2027-06-29 → 2027-11-24 (+148d) |  |  |
| RHD4CZ9L02SL4200 | Lean Concrete for Distribution Pillars for Street Lighting Network - (RD-L-2)-Z9-L02-SL | 2027-06-30 → 2027-11-25 (+148d) | 2027-07-01 → 2027-11-27 (+149d) |  |  |
| RHD4CZ9L02SL4300 | Installation of Distribution Pillars for Street Lighting Network - (RD-L-2)-Z9-L02-SL | 2027-07-03 → 2027-11-28 (+148d) | 2027-07-04 → 2027-11-29 (+148d) |  |  |
| 8618 | **RHD4-02-002-L02-(SL)-Street Lighting Earthing System** | 2027-07-05 → 2027-11-30 (+148d) | 2027-07-06 → 2027-12-01 (+148d) |  |  |
| RHD4CZ9L02SL6100 | Installation of Earthing for Lighting Poles and Fedder Pillers for Street Lighting Network - (RD-L-2)-Z9-L02-SL | 2027-07-05 → 2027-11-30 (+148d) | 2027-07-06 → 2027-12-01 (+148d) |  |  |
| 8624 | **RHD4-02-002-Z9-L02-Telecommunications Network - TC** | 2026-08-31 → 2027-01-30 (+152d) | 2027-04-21 → 2027-09-20 (+152d) |  |  |
| 8625 | **RHD4-02-002-L02-(TC)-Telecommunications Ducts** | 2027-03-15 → 2027-08-04 (+142d) | 2027-04-14 → 2027-09-04 (+143d) |  |  |
| RHD4CZ9L02TC2100 | Excavation of HDPE Ducts for Telecom Network - (RD-L-2)-Z9-L02-TC | 2027-03-15 → 2027-08-04 (+142d) | 2027-03-24 → 2027-08-14 (+143d) |  |  |
| RHD4CZ9L02TC2200 | Installation of HDPE Ducts for Telecom Network - (RD-L-2)-Z9-L02-TC | 2027-03-25 → 2027-08-15 (+143d) | 2027-04-04 → 2027-08-24 (+142d) |  |  |
| RHD4CZ9L02TC2400 | Backfilling of HDPE Ducts for Telecom Network - (RD-L-2)-Z9-L02-TC | 2027-04-05 → 2027-08-25 (+142d) | 2027-04-14 → 2027-09-04 (+143d) |  |  |
| 8626 | **RHD4-02-002-L02-(TC)-Telecommunications Manholes** | 2027-04-15 → 2027-09-05 (+143d) | 2027-04-21 → 2027-09-20 (+152d) |  |  |
| RHD4CZ9L02TC5100 | Excavation for Manholes for Telecom Network - (RD-L-2)-Z9-L02-TC | 2027-04-15 → 2027-09-05 (+143d) | 2027-04-18 → 2027-09-12 (+147d) | 3d → 7d |  |
| RHD4CZ9L02TC5200 | Installation of Manholes for Telecom Network - (RD-L-2)-Z9-L02-TC | 2027-04-19 → 2027-09-13 (+147d) | 2027-04-21 → 2027-09-20 (+152d) | 3d → 7d |  |
| 8627 | **RHD4-02-002-L02-(TC)-Telecomminications Road Crossings** | 2026-08-31 → 2027-01-30 (+152d) | 2026-09-08 → 2027-02-07 (+152d) |  |  |
| RHD4CZ9L02TC3100 | Excavation for Road Crossings for Telecom Network - (RD-L-2)-Z9-L02-TC | 2026-08-31 → 2027-01-30 (+152d) | 2026-09-01 → 2027-01-31 (+152d) |  |  |
| RHD4CZ9L02TC3200 | Installation of Road Crossings for Telecom Network - (RD-L-2)-Z9-L02-TC | 2026-09-02 → 2027-02-01 (+152d) | 2026-09-03 → 2027-02-02 (+152d) |  |  |
| RHD4CZ9L02TC3300 | Pouring of Road Crossings for Telecom Network - (RD-L-2)-Z9-L02-TC | 2026-09-05 → 2027-02-03 (+151d) | 2026-09-06 → 2027-02-04 (+151d) |  |  |
| RHD4CZ9L02TC3400 | Backfilling of Road Crossings for Telecom Network - (RD-L-2)-Z9-L02-TC | 2026-09-07 → 2027-02-06 (+152d) | 2026-09-08 → 2027-02-07 (+152d) |  |  |
| 8628 | **RHD4-02-002-Z9-L02-Information and Communication Technologies - ICT** | 2026-09-02 → 2027-02-01 (+152d) | 2027-06-24 → 2027-11-15 (+144d) |  |  |
| 8629 | **RHD4-02-002-L02-(ICT)-Information and Communication Technologies Ducts** | 2027-04-19 → 2027-09-13 (+147d) | 2027-06-01 → 2027-10-23 (+144d) |  |  |
| RHD4CZ9L02ICT2100 | Excavation of HDPE Ducts for ICT Network - (RD-L-2)-Z9-L02-ICT | 2027-04-19 → 2027-09-13 (+147d) | 2027-04-29 → 2027-09-25 (+149d) |  |  |
| RHD4CZ9L02ICT2200 | Installation of HDPE Ducts for ICT Network - (RD-L-2)-Z9-L02-ICT | 2027-05-01 → 2027-09-26 (+148d) | 2027-05-20 → 2027-10-11 (+144d) |  |  |
| RHD4CZ9L02ICT2400 | Backfilling of HDPE Ducts for ICT Network - (RD-L-2)-Z9-L02-ICT | 2027-05-22 → 2027-10-12 (+143d) | 2027-06-01 → 2027-10-23 (+144d) |  |  |
| 8630 | **RHD4-02-002-L02-(ICT)-Information and Communication Technologies Manholes** | 2027-06-02 → 2027-10-24 (+144d) | 2027-06-24 → 2027-11-15 (+144d) |  |  |
| RHD4CZ9L02ICT5100 | Excavation for Manholes for ICT Network - (RD-L-2)-Z9-L02-ICT | 2027-06-02 → 2027-10-24 (+144d) | 2027-06-13 → 2027-11-03 (+143d) |  | resources Skilled labor [34.09 h]; Unskilled Labor [34.09 h]; Equipment Opreator [27.23 h]; Excavator-Poclain [13.61 h]; Dump Truck [13.61 h]; Manhole Type 1 - ICT [6.6 nr]; Manhole Type 2 - ICT [0.9 nr] → Skilled labor [34.09 h]; Unskilled Labor [34.09 h]; Equipment Opreator [27.2 h]; Excavator-Poclain [13.6 h]; Dump Truck [13.6 h]; Manhole Type 1 - ICT [6.6 nr]; Manhole Type 2 - ICT [0.9 nr] |
| RHD4CZ9L02ICT5200 | Installation of Manholes for ICT Network - (RD-L-2)-Z9-L02-ICT | 2027-06-14 → 2027-11-04 (+143d) | 2027-06-24 → 2027-11-15 (+144d) |  | resources Skilled labor [34.09 h]; Unskilled Labor [34.09 h]; Equipment Opreator [13.61 h]; Boom Truck [13.61 h]; Manhole Type 1 - ICT [15.7 nr]; Manhole Type 2 - ICT [5.1 nr] → Skilled labor [34.09 h]; Unskilled Labor [34.09 h]; Equipment Opreator [13.6 h]; Boom Truck [13.6 h]; Manhole Type 1 - ICT [15.7 nr]; Manhole Type 2 - ICT [5.1 nr] |
| 8631 | **RHD4-02-002-L02-(ICT)-Information and Communication Technologies Road Crossings** | 2026-09-02 → 2027-02-01 (+152d) | 2026-09-10 → 2027-03-04 (+175d) |  |  |
| RHD4CZ9L02ICT3100 | Excavation for Road Crossings for ICT Network - (RD-L-2)-Z9-L02-ICT | 2026-09-02 → 2027-02-01 (+152d) | 2026-09-03 → 2027-02-03 (+153d) | 2d → 3d |  |
| RHD4CZ9L02ICT3200 | Installation of Road Crossings for ICT Network - (RD-L-2)-Z9-L02-ICT | 2026-09-05 → 2027-02-20 (+168d) | 2026-09-06 → 2027-02-24 (+171d) | 2d → 4d | resources Carpenter [4.14 h]; Skilled labor [40.84 h]; Unskilled Labor [40.84 h]; Steel Fixer [4.14 h]; Road crossing ducts, (2*50mm) HDPE -ICT [5.63 m] → Carpenter [4.14 h]; Skilled labor [40.8 h]; Unskilled Labor [40.8 h]; Steel Fixer [4.14 h]; Road crossing ducts, (2*50mm) HDPE -ICT [5.63 m] |
| RHD4CZ9L02ICT3300 | Pouring of Road Crossings for ICT Network - (RD-L-2)-Z9-L02-ICT | 2026-09-07 → 2027-02-25 (+171d) | 2026-09-08 → 2027-03-01 (+174d) | 2d → 4d | resources Skilled labor [40.84 h]; Unskilled Labor [40.84 h]; Equipment Opreator [16.34 h]; Concrete Mixer Truck [8.17 h]; Concrete Pump [8.17 h]; Road crossing ducts, (2*50mm) HDPE -ICT [36.6 m] → Skilled labor [40.8 h]; Unskilled Labor [40.8 h]; Equipment Opreator [16.34 h]; Concrete Mixer Truck [8.17 h]; Concrete Pump [8.17 h]; Road crossing ducts, (2*50mm) HDPE -ICT [36.6 m] |
| RHD4CZ9L02ICT3400 | Backfilling of Road Crossings for ICT Network - (RD-L-2)-Z9-L02-ICT | 2026-09-09 → 2027-03-02 (+174d) | 2026-09-10 → 2027-03-04 (+175d) | 2d → 3d |  |
| 8632 | **RHD4-02-002-Z9-L02-Security Network - CCTV** | 2027-06-26 → 2027-11-16 (+143d) | 2027-07-26 → 2027-12-16 (+143d) |  |  |
| 8633 | **RHD4-02-002-L02-(CCTV)-Civil Works** | 2027-06-26 → 2027-11-16 (+143d) | 2027-06-30 → 2027-11-21 (+144d) |  |  |
| RHD4CZ9L02CCTV2100 | Civil Works for Security Network - (RD-L-2)-Z9-L02-CCTV | 2027-06-26 → 2027-11-16 (+143d) | 2027-06-30 → 2027-11-21 (+144d) |  |  |
| 8634 | **RHD4-02-002-L02-(CCTV)-CCTV Poles** | 2027-07-01 → 2027-11-22 (+144d) | 2027-07-12 → 2027-12-02 (+143d) |  |  |
| RHD4CZ9L02CCTV1100 | Excavation for RC Base for CCTV Poles for Security Network - (RD-L-2)-Z9-L02-CCTV | 2027-07-01 → 2027-11-22 (+144d) | 2027-07-03 → 2027-11-23 (+143d) |  |  |
| RHD4CZ9L02CCTV1200 | Installation for RC Base for CCTV Poles for Security Network - (RD-L-2)-Z9-L02-CCTV | 2027-07-04 → 2027-11-24 (+143d) | 2027-07-05 → 2027-11-25 (+143d) |  |  |
| RHD4CZ9L02CCTV1300 | Backfill for RC Base for CCTV Poles for Security Network - (RD-L-2)-Z9-L02-CCTV | 2027-07-06 → 2027-11-27 (+144d) | 2027-07-07 → 2027-11-28 (+144d) |  |  |
| RHD4CZ9L02CCTV1400 | Installation for CCTV Poles for Security Network - (RD-L-2)-Z9-L02-CCTV | 2027-07-08 → 2027-11-29 (+144d) | 2027-07-10 → 2027-11-30 (+143d) |  |  |
| RHD4CZ9L02CCTV1500 | Protection post Installation for CCTV Poles for Security Network - (RD-L-2)-Z9-L02-CCTV | 2027-07-11 → 2027-12-01 (+143d) | 2027-07-12 → 2027-12-02 (+143d) |  |  |
| 8635 | **RHD4-02-002-L02-(CCTV)-Camera** | 2027-07-13 → 2027-12-04 (+144d) | 2027-07-14 → 2027-12-05 (+144d) |  |  |

| ID | Task | Start | Finish | Duration | Other |
| --- | --- | --- | --- | --- | --- |
| RHD4CZ9L02CCTV3100 | Installation for Cameras for Security Network - (RD-L-2)-Z9-L02-CCTV | 2027-07-13 → 2027-12-04 (+144d) | 2027-07-14 → 2027-12-05 (+144d) |  |  |
| 8636 | **RHD4-02-002-L02-(CCTV)-Power and Infrastructure** | 2027-07-11 → 2027-12-01 (+143d) | 2027-07-12 → 2027-12-02 (+143d) |  |  |
| RHD4CZ9L02CCTV4100 | Installation of Power outlet, UPS and midspan for PTZ Camerafor Cameras for Security Network - (RD-L-2)-Z9-L02-CCTV | 2027-07-11 → 2027-12-01 (+143d) | 2027-07-12 → 2027-12-02 (+143d) |  |  |
| 8638 | **RHD4-02-002-L02-(CCTV)-CCTV Panels and Components** | 2027-07-15 → 2027-12-06 (+144d) | 2027-07-26 → 2027-12-16 (+143d) |  |  |
| RHD4CZ9L02CCTV6100 | Installation for CCTV Panels for Security Network - (RD-L-2)-Z9-L02-CCTV | 2027-07-15 → 2027-12-06 (+144d) | 2027-07-26 → 2027-12-16 (+143d) |  |  |
| 5622 | **RHD4-02-002-Z7** |  | 2027-11-23 → 2028-05-30 (+189d) |  |  |
| 6190 | **RHD4-02-002-Z7-C032** | 2026-08-17 → 2027-02-20 (+187d) | 2027-03-20 → 2027-10-14 (+208d) |  |  |
| 6369 | **RHD4-02-002-Z7-C032-Road Works - RD** | 2026-08-30 → 2027-03-04 (+186d) | 2027-03-20 → 2027-10-14 (+208d) |  |  |
| 6370 | **RHD4-02-002-C032-(RD)-Subgrade** | 2026-08-30 → 2027-03-04 (+186d) | 2026-09-05 → 2027-03-14 (+190d) |  |  |
| RHD4CZ7C032RD1100 | Supply, lay and compaction subgrade compacted thickness 300 mm for Roads - (RD-C-3/2)-Z7-C032-RD | 2026-08-30 → 2027-03-04 (+186d) | 2026-09-05 → 2027-03-14 (+190d) |  |  |
| 6371 | **RHD4-02-002-C032-(RD)-Aggregate Base Course** | 2026-09-06 → 2027-03-15 (+190d) | 2026-09-10 → 2027-03-20 (+191d) |  |  |
| RHD4CZ7C032RD2100 | Supply, lay and compaction Aggregate base course compacted thickness 300 mmfor Roads - (RD-C-3/2)-Z7-C032-RD | 2026-09-06 → 2027-03-15 (+190d) | 2026-09-10 → 2027-03-20 (+191d) |  |  |
| 6372 | **RHD4-02-002-C032-(RD)-Bituminous base course Two Layers, including (MC1)&(RC2)** | 2026-09-12 → 2027-03-21 (+190d) | 2027-03-06 → 2027-09-29 (+207d) |  |  |
| RHD4CZ7C032RD3100 | Supply, lay and Asphaltic base course including Prime Coat (MC1) for 1st Layer - (RD-C-3/2)-Z7-C032-RD | 2026-09-12 → 2027-03-21 (+190d) | 2026-09-15 → 2027-03-24 (+190d) |  | resources Skilled labor [33.22 h]; Unskilled Labor [199.29 h]; Equipment Opreator [498.12 h]; Bobcat [33.22 h]; Roller compactor [33.22 h]; Asphalt Paver [33.22 h]; Rubber Compactor [66.43 h]; MC1/RC2 Sprinkler [33.22 h]; Dump Truck [298.83 h]; Bituminous base course (Grading I - Class A), including Prime coat (MC1) & tack coate (RC2) [1214.99 m3] → Skilled labor [33.22 h]; Unskilled Labor [199.29 h]; Equipment Opreator [498.12 h]; Bobcat [33.22 h]; Roller compactor [33.22 h]; Asphalt Paver [33.22 h]; Rubber Compactor [66.4 h]; MC1/RC2 Sprinkler [33.22 h]; Dump Truck [298.83 h]; Bituminous base course (Grading I - Class A), including Prime coat (MC1) & tack coate (RC2) [1214.99 m3] |
| RHD4CZ7C032RD3200 | Supply, lay and Asphaltic base course including Tack Coat (RC2) for 2nd Layer - (RD-C-3/2)-Z7-C032-RD | 2027-03-02 → 2027-09-26 (+208d) | 2027-03-06 → 2027-09-29 (+207d) |  | resources Skilled labor [33.22 h]; Unskilled Labor [199.29 h]; Equipment Opreator [498.12 h]; Bobcat [33.22 h]; Roller compactor [33.22 h]; Asphalt Paver [33.22 h]; Rubber Compactor [66.43 h]; MC1/RC2 Sprinkler [33.22 h]; Dump Truck [298.83 h]; Bituminous base course (Grading I - Class A), including Prime coat (MC1) & tack coate (RC2) [1214.99 m3] → Skilled labor [33.22 h]; Unskilled Labor [199.29 h]; Equipment Opreator [498.12 h]; Bobcat [33.22 h]; Roller compactor [33.22 h]; Asphalt Paver [33.22 h]; Rubber Compactor [66.4 h]; MC1/RC2 Sprinkler [33.22 h]; Dump Truck [298.83 h]; Bituminous base course (Grading I - Class A), including Prime coat (MC1) & tack coate (RC2) [1214.99 m3] |
| 6374 | **RHD4-02-002-C032-(RD)-Precast Concrete Curb** | 2027-03-07 → 2027-09-30 (+207d) | 2027-03-13 → 2027-10-07 (+208d) |  |  |
| RHD4CZ7C032RD5100 | Supply and installation Precast Concrete Kerb for Roads - (RD-C-3/2)-Z7-C032-RD | 2027-03-07 → 2027-09-30 (+207d) | 2027-03-13 → 2027-10-07 (+208d) | 3d → 7d | resources Mason [220.75 h]; Skilled labor [73.62 h]; Unskilled Labor [220.75 h]; Equipment Opreator [147.13 h]; Bobcat [73.62 h]; Concrete Mixer Truck [73.62 h]; Precast Concrete Curbstone, type K1 [3040 m] → Mason [220.75 h]; Skilled labor [73.6 h]; Unskilled Labor [220.75 h]; Equipment Opreator [147.13 h]; Bobcat [73.6 h]; Concrete Mixer Truck [73.6 h]; Precast Concrete Curbstone, type K1 [3040 m] |
| 6377 | **RHD4-02-002-C032-(RD)-Traffic Signage** | 2027-03-14 → 2027-10-09 (+209d) | 2027-03-20 → 2027-10-14 (+208d) |  |  |
| RHD4CZ7C032RD8100 | Installation of Traffic Signage for Road Network - (RD-C-3/2)-Z7-C032-RD | 2027-03-14 → 2027-10-09 (+209d) | 2027-03-20 → 2027-10-14 (+208d) |  | resources Skilled labor [130.68 h]; Unskilled Labor [65.34 h]; Electrician [17.42 h]; Equipment Opreator [20.04 h]; Boom Truck [13.07 h]; Concrete Mixer Truck [6.97 h]; Traffic signs, ground mounted, 1 Sheet Aluminium, (breakaway)Single post [15 nr] → Skilled labor [130.68 h]; Unskilled Labor [65.34 h]; Electrician [17.42 h]; Equipment Opreator [20 h]; Boom Truck [13.07 h]; Concrete Mixer Truck [6.97 h]; Traffic signs, ground mounted, 1 Sheet Aluminium, (breakaway)Single post [15 nr] |
| 6373 | **RHD4-02-002-C032-(RD)-Bituminous concrete wearing course including tack coat (RC2)** | 2027-03-14 → 2027-10-09 (+209d) | 2027-03-15 → 2027-10-10 (+209d) |  |  |
| RHD4CZ7C032RD4100 | Supply, lay and compaction Asphaltic wearing course including tack Coat (RC2)for Road Network - (RD-C-3/2)-Z7-C032-RD | 2027-03-14 → 2027-10-09 (+209d) | 2027-03-15 → 2027-10-10 (+209d) |  |  |
| 6376 | **RHD4-02-002-C032-(RD)-Pavement Marking** | 2027-03-16 → 2027-10-11 (+209d) | 2027-03-20 → 2027-10-14 (+208d) |  |  |
| RHD4CZ7C032RD7100 | Pavement Markings for Road Network - (RD-C-3/2)-Z7-C032-RD | 2027-03-16 → 2027-10-11 (+209d) | 2027-03-20 → 2027-10-14 (+208d) |  |  |
| 6280 | **RHD4-02-002-Z7-C032-Potable Network - PT** | 2027-02-10 → 2027-05-22 (+101d) | 2027-03-18 → 2027-06-23 (+97d) |  |  |
| 6283 | **RHD4-02-002-C032-(PT)-HDPE Pipes - 200 mm diameter** | 2027-02-10 → 2027-05-22 (+101d) | 2027-02-28 → 2027-06-07 (+99d) |  |  |
| RHD4CZ7C032PT1102 | Excavation works for HDPE Pipline 200 mm - (RD-C-3/2)-Z7-C032-PT | 2027-02-10 → 2027-05-22 (+101d) | 2027-02-11 → 2027-05-23 (+101d) |  |  |
| RHD4CZ7C032PT1202 | Bedding works for HDPE Pipline 200 mm - (RD-C-3/2)-Z7-C032-PT | 2027-02-13 → 2027-05-24 (+100d) | 2027-02-14 → 2027-05-25 (+100d) |  |  |
| RHD4CZ7C032PT1302 | Installing for HDPE Pipline 200 mm - (RD-C-3/2)-Z7-C032-PT | 2027-02-15 → 2027-05-26 (+100d) | 2027-02-16 → 2027-05-27 (+100d) |  |  |
| RHD4CZ7C032PT1402 | Primary Test for HDPE Pipline 200 mm - (RD-C-3/2)-Z7-C032-PT | 2027-02-24 → 2027-06-03 (+99d) | 2027-02-25 → 2027-06-05 (+100d) |  |  |
| RHD4CZ7C032PT1502 | Backfilling and warning tape works for HDPE Pipline 200 mm - (RD-C-3/2)-Z7-C032-PT | 2027-02-27 → 2027-06-06 (+99d) | 2027-02-28 → 2027-06-07 (+99d) |  |  |
| 6282 | **RHD4-02-002-C032-(PT)-HDPE Pipes - 160 mm diameter** | 2027-02-13 → 2027-05-24 (+100d) | 2027-02-28 → 2027-06-07 (+99d) |  |  |
| RHD4CZ7C032PT1101 | Excavation works for HDPE Pipline 160 mm - (RD-C-3/2)-Z7-C032-PT | 2027-02-13 → 2027-05-24 (+100d) | 2027-02-14 → 2027-05-25 (+100d) |  |  |
| RHD4CZ7C032PT1201 | Bedding works for HDPE Pipline 160 mm - (RD-C-3/2)-Z7-C032-PT | 2027-02-15 → 2027-05-26 (+100d) | 2027-02-16 → 2027-05-27 (+100d) |  | resources Skilled labor [11.22 h]; Unskilled Labor [22.33 h]; Equipment Opreator [22.33 h]; Excavator-Poclain [11.22 h]; Dump Truck [11.22 h]; HDPE (160mm Diameter) - PT - Depth: less than 1.5m [15.4 m] → Skilled labor [11.2 h]; Unskilled Labor [22.33 h]; Equipment Opreator [22.33 h]; Excavator-Poclain [11.2 h]; Dump Truck [11.2 h]; HDPE (160mm Diameter) - PT - Depth: less than 1.5m [15.4 m] |
| RHD4CZ7C032PT1301 | Installing for HDPE Pipline 160 mm - (RD-C-3/2)-Z7-C032-PT | 2027-02-17 → 2027-05-29 (+101d) | 2027-02-18 → 2027-05-31 (+102d) | 2d → 3d |  |
| RHD4CZ7C032PT1401 | Primary Test for HDPE Pipline 160 mm - (RD-C-3/2)-Z7-C032-PT | 2027-02-24 → 2027-06-03 (+99d) | 2027-02-25 → 2027-06-05 (+100d) |  |  |
| RHD4CZ7C032PT1501 | Backfilling and warning tape works for HDPE Pipline 160 mm - (RD-C-3/2)-Z7-C032-PT | 2027-02-27 → 2027-06-06 (+99d) | 2027-02-28 → 2027-06-07 (+99d) |  | resources Skilled labor [16.77 h]; Unskilled Labor [33.54 h]; Equipment Opreator [33.54 h]; Excavator-Poclain [16.77 h]; Dump Truck [16.77 h]; HDPE (160mm Diameter) - PT - Depth: less than 1.5m [61.59 m] → Skilled labor [16.8 h]; Unskilled Labor [33.54 h]; Equipment Opreator [33.54 h]; Excavator-Poclain [16.8 h]; Dump Truck [16.8 h]; HDPE (160mm Diameter) - PT - Depth: less than 1.5m [61.59 m] |
| 6286 | **RHD4-02-002-C032-(PT)-Gate Valves (Direct Buried)** | 2027-02-17 → 2027-05-30 (+102d) | 2027-03-02 → 2027-06-09 (+99d) |  |  |
| RHD4CZ7C032PT3100 | Installation for Direct Buried Gate Valves - (RD-C-3/2)-Z7-C032-PT | 2027-02-17 → 2027-05-30 (+102d) | 2027-02-18 → 2027-05-31 (+102d) |  |  |
| RHD4CZ7C032PT3200 | Stem and Service box for Direct Buried Gate Valves - (RD-C-3/2)-Z7-C032-PT | 2027-03-01 → 2027-06-08 (+99d) | 2027-03-02 → 2027-06-09 (+99d) |  |  |
| 6289 | **RHD4-02-002-C032-(PT)-Wash out Valve Chambers** | 2027-02-20 → 2027-06-01 (+101d) | 2027-03-01 → 2027-06-09 (+100d) |  |  |
| RHD4CZ7C032PT2101 | Excavation and Bedding for Wash out Valve Chambers for Potable Water Network - (RD-C-3/2)-Z7-C032-PT | 2027-02-20 → 2027-06-01 (+101d) | 2027-02-21 → 2027-06-02 (+101d) |  |  |
| RHD4CZ7C032PT2201 | PC works for Wash out Valve Chambers for Potable Water Network - (RD-C-3/2)-Z7-C032-PT | 2027-02-23 → 2027-06-03 (+100d) | 2027-02-24 → 2027-06-05 (+101d) |  |  |
| RHD4CZ7C032PT2301 | Installation for Wash out Valve Chambers for Potable Water Network - (RD-C-3/2)-Z7-C032-PT | 2027-02-25 → 2027-06-06 (+101d) | 2027-02-27 → 2027-06-07 (+100d) |  |  |
| RHD4CZ7C032PT2401 | Backfilling works for Wash out Valve Chambers for Potable Water Network - (RD-C-3/2)-Z7-C032-PT | 2027-02-28 → 2027-06-08 (+100d) | 2027-03-01 → 2027-06-09 (+100d) |  |  |
| 6290 | **RHD4-02-002-C032-(PT)-Wash out Valves** | 2027-02-28 → 2027-06-08 (+100d) | 2027-03-03 → 2027-06-12 (+101d) |  |  |
| RHD4CZ7C032PT3102 | Installation for Wash out Valves for Potable Water Network - (RD-C-3/2)-Z7-C032-PT | 2027-02-28 → 2027-06-08 (+100d) | 2027-03-01 → 2027-06-09 (+100d) |  |  |
| RHD4CZ7C032PT3202 | Stem and Service box for Wash out Valves for Potable Water Network - (RD-C-3/2)-Z7-C032-PT | 2027-03-02 → 2027-06-10 (+100d) | 2027-03-03 → 2027-06-12 (+101d) |  |  |
| 6293 | **RHD4-02-002-C032-(PT)-Fire Hydrant** | 2027-03-04 → 2027-06-13 (+101d) | 2027-03-18 → 2027-06-23 (+97d) |  |  |
| RHD4CZ7C032PT4100 | Excavation and Bedding and Pipe Installation for Fire Hydrant - (RD-C-3/2)-Z7-C032-PT | 2027-03-04 → 2027-06-13 (+101d) | 2027-03-06 → 2027-06-14 (+100d) |  |  |
| RHD4CZ7C032PT4200 | Valve Installation for Fire Hydrant - (RD-C-3/2)-Z7-C032-PT | 2027-03-07 → 2027-06-15 (+100d) | 2027-03-08 → 2027-06-16 (+100d) |  |  |
| RHD4CZ7C032PT4300 | Stem for Fire Hydrant - (RD-C-3/2)-Z7-C032-PT | 2027-03-13 → 2027-06-17 (+96d) | 2027-03-14 → 2027-06-19 (+97d) |  |  |
| RHD4CZ7C032PT4400 | Fire Installation for Fire Hydrant - (RD-C-3/2)-Z7-C032-PT | 2027-03-15 → 2027-06-20 (+97d) | 2027-03-16 → 2027-06-21 (+97d) |  |  |
| RHD4CZ7C032PT4500 | Protection Barriers for Fire Hydrant - (RD-C-3/2)-Z7-C032-PT | 2027-03-17 → 2027-06-22 (+97d) | 2027-03-18 → 2027-06-23 (+97d) |  |  |
| 6294 | **RHD4-02-002-C032-(PT)-Concrete Encasement** | 2027-02-17 → 2027-05-29 (+101d) | 2027-02-23 → 2027-06-02 (+99d) |  |  |
| RHD4CZ7C032PT5100 | Pipe Encasement for Potable Pipelines - (RD-C-3/2)-Z7-C032-PT | 2027-02-17 → 2027-05-29 (+101d) | 2027-02-23 → 2027-06-02 (+99d) |  | resources Skilled labor [46.39 h]; Unskilled Labor [46.39 h]; Equipment Opreator [51.08 h]; Concrete Mixer Truck [4.68 h]; Dump Truck [46.39 h]; Pipe Encasement - PT [21.31 m3] → Skilled labor [46.4 h]; Unskilled Labor [46.4 h]; Equipment Opreator [51.08 h]; Concrete Mixer Truck [4.68 h]; Dump Truck [46.4 h]; Pipe Encasement - PT [21.31 m3] |
| 1755 | **RHD4-02-002-Z7-C032-Irrigation Network - IRR** | 2027-02-15 → 2027-05-27 (+101d) | 2027-03-14 → 2027-06-19 (+97d) |  |  |
| 1770 | **RHD4-02-002-C032-(IRR)-Air Valves** | 2027-02-23 → 2027-06-03 (+100d) | 2027-03-08 → 2027-06-16 (+100d) |  |  |
| RHD4CZ7C032IRR3103 | Installation for Air Valves for Irrigation Network - (RD-C-3/2)-Z7-C032-IRR | 2027-02-23 → 2027-06-03 (+100d) | 2027-02-24 → 2027-06-05 (+101d) |  |  |
| RHD4CZ7C032IRR3203 | Stem and Service box for Air Valves for Irrigation Network - (RD-C-3/2)-Z7-C032-IRR | 2027-03-07 → 2027-06-15 (+100d) | 2027-03-08 → 2027-06-16 (+100d) |  |  |
| 6107 | **RHD4-02-002-C032-(IRR)-HDPE Pipes - 160 mm diameter** | 2027-02-15 → 2027-05-27 (+101d) | 2027-03-08 → 2027-06-16 (+100d) |  |  |
| RHD4CZ7C032IRR1100 | Excavation works for HDPE Pipline 160 mm - (RD-C-3/2)-Z7-C032-IRR | 2027-02-15 → 2027-05-27 (+101d) | 2027-02-18 → 2027-05-31 (+102d) |  |  |
| RHD4CZ7C032IRR1200 | Bedding works for HDPE Pipline 160 mm - (RD-C-3/2)-Z7-C032-IRR | 2027-02-20 → 2027-06-01 (+101d) | 2027-02-24 → 2027-06-05 (+101d) |  |  |
| RHD4CZ7C032IRR1300 | Installing for HDPE Pipline 160 mm - (RD-C-3/2)-Z7-C032-IRR | 2027-02-25 → 2027-06-06 (+101d) | 2027-03-01 → 2027-06-09 (+100d) |  |  |
| RHD4CZ7C032IRR1400 | Primary Test for HDPE Pipline 160 mm - (RD-C-3/2)-Z7-C032-IRR | 2027-03-02 → 2027-06-10 (+100d) | 2027-03-03 → 2027-06-12 (+101d) |  |  |
| RHD4CZ7C032IRR1500 | Backfilling and warning tape works for HDPE Pipline 160 mm - (RD-C-3/2)-Z7-C032-IRR | 2027-03-04 → 2027-06-13 (+101d) | 2027-03-08 → 2027-06-16 (+100d) |  |  |
| 6115 | **RHD4-02-002-C032-(IRR)-Gate Valves (Direct Buried)** | 2027-02-28 → 2027-06-08 (+100d) | 2027-03-14 → 2027-06-19 (+97d) |  |  |
| RHD4CZ7C032IRR3100 | Installation for Direct Buried Gate Valves - (RD-C-3/2)-Z7-C032-IRR | 2027-02-28 → 2027-06-08 (+100d) | 2027-03-01 → 2027-06-09 (+100d) |  |  |
| RHD4CZ7C032IRR3200 | Stem and Service box for Direct Buried Gate Valves - (RD-C-3/2)-Z7-C032-IRR | 2027-03-13 → 2027-06-17 (+96d) | 2027-03-14 → 2027-06-19 (+97d) |  |  |
| 6685 | **RHD4-02-002-C032-(IRR)-Wash out Chamber** | 2027-02-15 → 2027-05-27 (+101d) | 2027-02-24 → 2027-06-05 (+101d) |  |  |
| RHD4CZ7C032IRR2101 | Excavation and Bedding for Wash out Chamber for Irrigation Network - (RD-C-3/2)-Z7-C032-IRR | 2027-02-15 → 2027-05-27 (+101d) | 2027-02-16 → 2027-05-29 (+102d) |  |  |

| ID | Task | Start | Finish | Duration | Other |
| --- | --- | --- | --- | --- | --- |
| RHD4CZ7C032IRR2201 | PC works for Wash out Chamber for Irrigation Network - (RD-C-3/2)-Z7-C032-IRR | 2027-02-17 → 2027-05-30 (+102d) | 2027-02-18 → 2027-05-31 (+102d) |  |  |
| RHD4CZ7C032IRR2301 | Installation for Wash out Chamber for Irrigation Network - (RD-C-3/2)-Z7-C032-IRR | 2027-02-20 → 2027-06-01 (+101d) | 2027-02-21 → 2027-06-02 (+101d) |  |  |
| RHD4CZ7C032IRR2401 | Backfilling works for Wash out Chamber for Irrigation Network - (RD-C-3/2)-Z7-C032-IRR | 2027-02-23 → 2027-06-03 (+100d) | 2027-02-24 → 2027-06-05 (+101d) |  |  |
| 6686 | **RHD4-02-002-C032-(IRR)-Wash out Valves** | 2027-02-23 → 2027-06-03 (+100d) | 2027-02-27 → 2027-06-07 (+100d) |  |  |
| RHD4CZ7C032IRR3102 | Installation for Wash out Valve for Irrigation Network - (RD-C-3/2)-Z7-C032-IRR | 2027-02-23 → 2027-06-03 (+100d) | 2027-02-24 → 2027-06-05 (+101d) |  |  |
| RHD4CZ7C032IRR3202 | Stem and Service box for Wash out Valve for Irrigation Network - (RD-C-3/2)-Z7-C032-IRR | 2027-02-25 → 2027-06-06 (+101d) | 2027-02-27 → 2027-06-07 (+100d) |  |  |
| 1769 | **RHD4-02-002-C032-(IRR)-Air Valve Chamber** | 2027-02-15 → 2027-05-27 (+101d) | 2027-03-06 → 2027-06-14 (+100d) |  |  |
| RHD4CZ7C032IRR2102 | Excavation and Bedding for Valve Chamber for Irrigation Network - (RD-C-3/2)-Z7-C032-IRR | 2027-02-15 → 2027-05-27 (+101d) | 2027-02-16 → 2027-05-29 (+102d) |  |  |
| RHD4CZ7C032IRR2202 | PC works for Valve Chamber for Irrigation Network - (RD-C-3/2)-Z7-C032-IRR | 2027-02-17 → 2027-05-30 (+102d) | 2027-02-18 → 2027-05-31 (+102d) |  |  |
| RHD4CZ7C032IRR2302 | Installation for Valve Chamber for Irrigation Network - (RD-C-3/2)-Z7-C032-IRR | 2027-02-20 → 2027-06-01 (+101d) | 2027-02-21 → 2027-06-02 (+101d) |  |  |
| RHD4CZ7C032IRR2402 | Backfilling works for Valve Chamber for Irrigation Network - (RD-C-3/2)-Z7-C032-IRR | 2027-03-04 → 2027-06-13 (+101d) | 2027-03-06 → 2027-06-14 (+100d) |  |  |
| 1771 | **RHD4-02-002-C032-(IRR)-Concrete Encasement** | 2027-03-02 → 2027-06-10 (+100d) | 2027-03-03 → 2027-06-12 (+101d) |  |  |
| RHD4CZ7C032IRR5100 | Pipe Encasement for Irrigation Pipelines - (RD-C-3/2)-Z7-C032-IRR | 2027-03-02 → 2027-06-10 (+100d) | 2027-03-03 → 2027-06-12 (+101d) |  |  |
| 6329 | **RHD4-02-002-Z7-C032-Medium Voltage Network - MV** | 2026-09-16 → 2027-03-25 (+190d) | 2027-03-13 → 2027-08-16 (+156d) |  |  |
| 6330 | **RHD4-02-002-C032-(MV)-Medium Voltage cable trench** | 2027-02-03 → 2027-07-14 (+161d) | 2027-03-13 → 2027-08-16 (+156d) |  |  |
| RHD4CZ7C032MV1100 | Excavation for Medium Voltage Trench - (RD-C-3/2)-Z7-C032-MV | 2027-02-03 → 2027-07-14 (+161d) | 2027-02-09 → 2027-07-20 (+161d) |  |  |
| RHD4CZ7C032MV1200 | Trench Backfilling for Medium Voltage Network - (RD-C-3/2)-Z7-C032-MV | 2027-03-03 → 2027-08-10 (+160d) | 2027-03-13 → 2027-08-16 (+156d) |  |  |
| 6331 | **RHD4-02-002-C032-(MV)-Medium Voltage duct banks** | 2026-09-16 → 2027-03-25 (+190d) | 2026-10-21 → 2027-04-28 (+189d) |  |  |
| RHD4CZ7C032MV2100 | Excavation of Duct Banks for Medium Voltage Network - (RD-C-3/2)-Z7-C032-MV | 2026-09-16 → 2027-03-25 (+190d) | 2026-09-26 → 2027-04-03 (+189d) |  |  |
| RHD4CZ7C032MV2200 | Installation of Duct Banks for Medium Voltage Network - (RD-C-3/2)-Z7-C032-MV | 2026-09-27 → 2027-04-04 (+189d) | 2026-10-08 → 2027-04-15 (+189d) |  |  |
| RHD4CZ7C032MV2300 | Pouring of Duct Banks for Medium Voltage Network - (RD-C-3/2)-Z7-C032-MV | 2026-10-10 → 2027-04-17 (+189d) | 2026-10-18 → 2027-04-25 (+189d) |  |  |
| RHD4CZ7C032MV2400 | Backfilling of Duct Banks for Medium Voltage Network - (RD-C-3/2)-Z7-C032-MV | 2026-10-19 → 2027-04-26 (+189d) | 2026-10-21 → 2027-04-28 (+189d) |  |  |
| 6332 | **RHD4-02-002-C032-(MV)-Medium Voltage cables 3Cx 500 mm²** | 2027-02-10 → 2027-07-21 (+161d) | 2027-03-02 → 2027-08-09 (+160d) |  |  |
| RHD4CZ7C032MV3100 | Installation of Medium Voltage Cables 3Cx 500 mm² - (RD-C-3/2)-Z7-C032-MV | 2027-02-10 → 2027-07-21 (+161d) | 2027-02-17 → 2027-07-28 (+161d) |  | resources Skilled labor [69.04 h]; Unskilled Labor [275.96 h]; Electrician [137.98 h]; Equipment Opreator [207.03 h]; Boom Truck [69.04 h]; Cable Laying Machine [137.98 h]; Cable 13.8 kV 3Cx 500 mm² Al/XLPE,/LLDPE / Unarmored [2850.89 m] → Skilled labor [69.04 h]; Unskilled Labor [276 h]; Electrician [137.98 h]; Equipment Opreator [207.03 h]; Boom Truck [69.04 h]; Cable Laying Machine [137.98 h]; Cable 13.8 kV 3Cx 500 mm² Al/XLPE,/LLDPE / Unarmored [2850.89 m] |
| RHD4CZ7C032MV3200 | Joints Installation of Medium Voltage Cables 3Cx 500 mm² - (RD-C-3/2)-Z7-C032-MV | 2027-02-18 → 2027-07-29 (+161d) | 2027-02-21 → 2027-08-01 (+161d) |  | resources Skilled labor [27.23 h]; Unskilled Labor [108.9 h]; Electrician [54.45 h]; Equipment Opreator [27.23 h]; Boom Truck [27.23 h]; Straight joints cables for 13.8 kv 3Cx 500 mm², Al /XLPE/LLDPE [5 Unit] → Skilled labor [27.2 h]; Unskilled Labor [108.9 h]; Electrician [54.45 h]; Equipment Opreator [27.2 h]; Boom Truck [27.2 h]; Straight joints cables for 13.8 kv 3Cx 500 mm², Al /XLPE/LLDPE [5 Unit] |
| RHD4CZ7C032MV3300 | Testing of Medium Voltage Cables 3Cx 500 mm² - (RD-C-3/2)-Z7-C032-MV | 2027-02-23 → 2027-08-02 (+160d) | 2027-03-02 → 2027-08-09 (+160d) |  | resources Skilled labor [69.04 h]; Unskilled Labor [275.96 h]; Electrician [137.98 h]; Cable 13.8 kV 3Cx 500 mm² Al/XLPE,/LLDPE / Unarmored [316.77 m] → Skilled labor [69.04 h]; Unskilled Labor [276 h]; Electrician [137.98 h]; Cable 13.8 kV 3Cx 500 mm² Al/XLPE,/LLDPE / Unarmored [316.77 m] |
| 6336 | **RHD4-02-002-Z7-C032-Low Voltage Network - LV** | 2026-10-19 → 2027-03-14 (+146d) | 2026-11-03 → 2027-05-01 (+179d) |  |  |
| 6338 | **RHD4-02-002-C032-(LV)-Low Voltage Drawpit** | 2026-10-19 → 2027-03-14 (+146d) | 2026-10-24 → 2027-03-17 (+144d) |  |  |
| RHD4CZ7C032LV5100 | Excavation of Drawpit size 900x900x1000mm for Low Voltage Network - (RD-C-3/2)-Z7-C032-LV | 2026-10-19 → 2027-03-14 (+146d) | 2026-10-21 → 2027-03-15 (+145d) | 3d → 2d |  |
| RHD4CZ7C032LV5200 | Installation of Drawpit size 900x900x1000mm for Low Voltage Network - (RD-C-3/2)-Z7-C032-LV | 2026-10-22 → 2027-03-16 (+145d) | 2026-10-24 → 2027-03-17 (+144d) |  |  |
| 6339 | **RHD4-02-002-C032-(LV)-Low Voltage cables** | 2026-10-25 → 2027-03-18 (+144d) | 2026-11-03 → 2027-05-01 (+179d) |  |  |
| RHD4CZ7C032LV3100 | Excavation for Low Voltage Cables for Low Voltage Network - (RD-C-3/2)-Z7-C032-LV | 2026-10-25 → 2027-03-18 (+144d) | 2026-10-27 → 2027-03-21 (+145d) |  | resources Skilled labor [22.43 h]; Unskilled Labor [44.87 h]; Equipment Opreator [44.87 h]; Excavator-Poclain [22.43 h]; Boom Truck [22.43 h]; Cable, Copper 4x185mm2/ CU/XLPE/PVC [5.6 m]; Cable, Copper 4x70mm2/ CU/XLPE/PVC [2.55 m]; Cable, Copper 3x10mm2/ CU/XLPE/SWA/PVC [94.85 m] → Skilled labor [22.4 h]; Unskilled Labor [44.87 h]; Equipment Opreator [44.87 h]; Excavator-Poclain [22.4 h]; Boom Truck [22.4 h]; Cable, Copper 4x185mm2/ CU/XLPE/PVC [5.6 m]; Cable, Copper 4x70mm2/ CU/XLPE/PVC [2.55 m]; Cable, Copper 3x10mm2/ CU/XLPE/SWA/PVC [94.85 m] |
| RHD4CZ7C032LV3200 | Cable Laying of Low Voltage Cables for Low Voltage Network - (RD-C-3/2)-Z7-C032-LV | 2026-10-28 → 2027-03-22 (+145d) | 2026-10-29 → 2027-03-23 (+145d) |  |  |
| RHD4CZ7C032LV3300 | Warning tape and Backfill for Low Voltage Cables for Low Voltage Network - (RD-C-3/2)-Z7-C032-LV | 2026-10-31 → 2027-03-24 (+144d) | 2026-11-01 → 2027-03-25 (+144d) |  |  |
| RHD4CZ7C032LV3400 | Testing of Low Voltage Cables for Low Voltage Network - (RD-C-3/2)-Z7-C032-LV | 2026-11-02 → 2027-04-29 (+178d) | 2026-11-03 → 2027-05-01 (+179d) |  | resources Skilled labor [11.22 h]; Unskilled Labor [44.87 h]; Electrician [22.43 h]; Equipment Opreator [11.22 h]; Boom Truck [11.22 h]; Cable, Copper 4x185mm2/ CU/XLPE/PVC [1.4 m]; Cable, Copper 4x70mm2/ CU/XLPE/PVC [0.64 m]; Cable, Copper 3x10mm2/ CU/XLPE/SWA/PVC [23.71 m] → Skilled labor [11.2 h]; Unskilled Labor [44.87 h]; Electrician [22.4 h]; Equipment Opreator [11.2 h]; Boom Truck [11.2 h]; Cable, Copper 4x185mm2/ CU/XLPE/PVC [1.4 m]; Cable, Copper 4x70mm2/ CU/XLPE/PVC [0.64 m]; Cable, Copper 3x10mm2/ CU/XLPE/SWA/PVC [23.71 m] |
| 6342 | **RHD4-02-002-Z7-C032-Street Lighting Network - SL** | 2026-09-27 → 2027-02-23 (+149d) | 2026-12-03 → 2027-06-29 (+208d) |  |  |
| 6343 | **RHD4-02-002-C032-(SL)-Street Lighting duct banks** | 2026-09-27 → 2027-02-23 (+149d) | 2026-10-14 → 2027-03-16 (+153d) |  |  |
| RHD4CZ7C032SL2100 | Excavation of Duct Banks for Street Lighting Network - (RD-C-3/2)-Z7-C032-SL | 2026-09-27 → 2027-02-23 (+149d) | 2026-09-30 → 2027-02-27 (+150d) |  |  |
| RHD4CZ7C032SL2200 | Installation of Duct Banks for Street Lighting Network - (RD-C-3/2)-Z7-C032-SL | 2026-10-01 → 2027-02-28 (+150d) | 2026-10-06 → 2027-03-04 (+149d) |  |  |
| RHD4CZ7C032SL2300 | Pouring of Duct Banks for Street Lighting Network - (RD-C-3/2)-Z7-C032-SL | 2026-10-07 → 2027-03-06 (+150d) | 2026-10-11 → 2027-03-13 (+153d) |  |  |
| RHD4CZ7C032SL2400 | Backfilling of Duct Banks for Street Lighting Network - (RD-C-3/2)-Z7-C032-SL | 2026-10-12 → 2027-03-14 (+153d) | 2026-10-14 → 2027-03-16 (+153d) |  |  |
| 6344 | **RHD4-02-002-C032-(SL)-Street Lighting Drawpit** | 2026-11-04 → 2027-05-09 (+186d) | 2026-11-08 → 2027-05-12 (+185d) |  |  |
| RHD4CZ7C032SL5100 | Excavation of Drawpit size 600x600x900mm for Street Lighting Network - (RD-C-3/2)-Z7-C032-SL | 2026-11-04 → 2027-05-09 (+186d) | 2026-11-05 → 2027-05-10 (+186d) |  | resources Skilled labor [1.85 h]; Unskilled Labor [1.85 h]; Equipment Opreator [1.42 h]; Excavator-Poclain [0.76 h]; Dump Truck [0.76 h]; Drawpit with medium duty steel cover, size600x600x900mm, [0.3 Unit] → Skilled labor [1.85 h]; Unskilled Labor [1.85 h]; Equipment Opreator [1.42 h]; Excavator-Poclain [0.8 h]; Dump Truck [0.8 h]; Drawpit with medium duty steel cover, size600x600x900mm, [0.3 Unit] |
| RHD4CZ7C032SL5200 | Installation of Drawpit size 600x600x900mm for Street Lighting Network - (RD-C-3/2)-Z7-C032-SL | 2026-11-07 → 2027-05-11 (+185d) | 2026-11-08 → 2027-05-12 (+185d) |  | resources Skilled labor [1.85 h]; Unskilled Labor [1.85 h]; Equipment Opreator [0.76 h]; Boom Truck [0.76 h]; Drawpit with medium duty steel cover, size600x600x900mm, [1.7 Unit] → Skilled labor [1.85 h]; Unskilled Labor [1.85 h]; Equipment Opreator [0.8 h]; Boom Truck [0.8 h]; Drawpit with medium duty steel cover, size600x600x900mm, [1.7 Unit] |
| 6345 | **RHD4-02-002-C032-(SL)-Street Lighting cables** | 2026-11-09 → 2027-05-13 (+185d) | 2026-11-18 → 2027-05-27 (+190d) |  |  |
| RHD4CZ7C032SL3100 | Excavation for Street Lighting Cables for Street Lighting Network - (RD-C-3/2)-Z7-C032-SL | 2026-11-09 → 2027-05-13 (+185d) | 2026-11-11 → 2027-05-20 (+190d) |  |  |
| RHD4CZ7C032SL3200 | Cable Laying of Street Lighting Cables for Street Lighting Network - (RD-C-3/2)-Z7-C032-SL | 2026-11-12 → 2027-05-22 (+191d) | 2026-11-14 → 2027-05-23 (+190d) |  |  |
| RHD4CZ7C032SL3300 | Warning tape and Backfill for Street Lighting Cables for Street Lighting Network - (RD-C-3/2)-Z7-C032-SL | 2026-11-15 → 2027-05-24 (+190d) | 2026-11-16 → 2027-05-25 (+190d) |  |  |
| RHD4CZ7C032SL3400 | Testing of Street Lighting Cables for Street Lighting Network - (RD-C-3/2)-Z7-C032-SL | 2026-11-17 → 2027-05-26 (+190d) | 2026-11-18 → 2027-05-27 (+190d) |  |  |
| 6346 | **RHD4-02-002-C032-(SL)-Street Lighting Poles** | 2026-11-19 → 2027-06-15 (+208d) | 2026-12-03 → 2027-06-29 (+208d) |  |  |
| RHD4CZ7C032SL1100 | Excavation for RC Base for Lighting Poles for Street Lighting Network - (RD-C-3/2)-Z7-C032-SL | 2026-11-19 → 2027-06-15 (+208d) | 2026-11-21 → 2027-06-16 (+207d) |  |  |
| RHD4CZ7C032SL1200 | Installation for RC Base for Lighting Poles for Street Lighting Network - (RD-C-3/2)-Z7-C032-SL | 2026-11-22 → 2027-06-17 (+207d) | 2026-11-23 → 2027-06-19 (+208d) |  |  |
| RHD4CZ7C032SL1300 | Backfill for RC Base for Lighting Poles for Street Lighting Network - (RD-C-3/2)-Z7-C032-SL | 2026-11-24 → 2027-06-20 (+208d) | 2026-11-25 → 2027-06-21 (+208d) |  |  |
| RHD4CZ7C032SL1400 | Installation for Lighting Poles for Street Lighting Network - (RD-C-3/2)-Z7-C032-SL | 2026-11-26 → 2027-06-22 (+208d) | 2026-11-28 → 2027-06-23 (+207d) |  |  |
| RHD4CZ7C032SL1500 | Luminaire Installation for Lighting Poles for Street Lighting Network - (RD-C-3/2)-Z7-C032-SL | 2026-12-01 → 2027-06-27 (+208d) | 2026-12-03 → 2027-06-29 (+208d) |  |  |
| 6348 | **RHD4-02-002-C032-(SL)-Street Lighting Earthing System** | 2026-11-29 → 2027-06-24 (+207d) | 2026-11-30 → 2027-06-26 (+208d) |  |  |
| RHD4CZ7C032SL6100 | Installation of Earthing for Lighting Poles and Fedder Pillers for Street Lighting Network - (RD-C-3/2)-Z7-C032-SL | 2026-11-29 → 2027-06-24 (+207d) | 2026-11-30 → 2027-06-26 (+208d) |  |  |
| 6354 | **RHD4-02-002-Z7-C032-Telecommunications Network - TC** | 2026-08-17 → 2027-02-20 (+187d) | 2026-12-27 → 2027-07-22 (+207d) |  |  |
| 6355 | **RHD4-02-002-C032-(TC)-Telecommunications Ducts** | 2026-12-05 → 2027-06-30 (+207d) | 2026-12-27 → 2027-07-22 (+207d) |  |  |
| RHD4CZ7C032TC2100 | Excavation of HDPE Ducts for Telecom Network - (RD-C-3/2)-Z7-C032-TC | 2026-12-05 → 2027-06-30 (+207d) | 2026-12-10 → 2027-07-06 (+208d) |  | resources Skilled labor [56.41 h]; Unskilled Labor [56.41 h]; Equipment Opreator [112.82 h]; Excavator-Poclain [56.41 h]; Dump Truck [56.41 h]; (6*50mm) HDPE ducts -TC [155.4 m] → Skilled labor [56.41 h]; Unskilled Labor [56.41 h]; Equipment Opreator [112.8 h]; Excavator-Poclain [56.41 h]; Dump Truck [56.41 h]; (6*50mm) HDPE ducts -TC [155.4 m] |
| RHD4CZ7C032TC2200 | Installation of HDPE Ducts for Telecom Network - (RD-C-3/2)-Z7-C032-TC | 2026-12-12 → 2027-07-07 (+207d) | 2026-12-20 → 2027-07-15 (+207d) |  |  |
| RHD4CZ7C032TC2400 | Backfilling of HDPE Ducts for Telecom Network - (RD-C-3/2)-Z7-C032-TC | 2026-12-21 → 2027-07-17 (+208d) | 2026-12-27 → 2027-07-22 (+207d) |  |  |
| 6356 | **RHD4-02-002-C032-(TC)-Telecommunications Manholes** | 2026-12-12 → 2027-07-07 (+207d) | 2026-12-17 → 2027-07-13 (+208d) |  |  |
| RHD4CZ7C032TC5100 | Excavation for Manholes for Telecom Network - (RD-C-3/2)-Z7-C032-TC | 2026-12-12 → 2027-07-07 (+207d) | 2026-12-14 → 2027-07-10 (+208d) |  |  |
| RHD4CZ7C032TC5200 | Installation of Manholes for Telecom Network - (RD-C-3/2)-Z7-C032-TC | 2026-12-15 → 2027-07-11 (+208d) | 2026-12-17 → 2027-07-13 (+208d) |  |  |
| 6357 | **RHD4-02-002-C032-(TC)-Telecomminications Road Crossings** | 2026-08-17 → 2027-02-20 (+187d) | 2026-08-29 → 2027-03-03 (+186d) |  |  |
| RHD4CZ7C032TC3100 | Excavation for Road Crossings for Telecom Network - (RD-C-3/2)-Z7-C032-TC | 2026-08-17 → 2027-02-20 (+187d) | 2026-08-19 → 2027-02-21 (+186d) | 3d → 2d |  |
| RHD4CZ7C032TC3200 | Installation of Road Crossings for Telecom Network - (RD-C-3/2)-Z7-C032-TC | 2026-08-20 → 2027-02-23 (+187d) | 2026-08-23 → 2027-02-25 (+186d) |  |  |
| RHD4CZ7C032TC3300 | Pouring of Road Crossings for Telecom Network - (RD-C-3/2)-Z7-C032-TC | 2026-08-24 → 2027-02-27 (+187d) | 2026-08-26 → 2027-03-01 (+187d) |  |  |
| RHD4CZ7C032TC3400 | Backfilling of Road Crossings for Telecom Network - (RD-C-3/2)-Z7-C032-TC | 2026-08-27 → 2027-03-02 (+187d) | 2026-08-29 → 2027-03-03 (+186d) |  |  |

| ID | Task | Start | Finish | Complete | Other |
| --- | --- | --- | --- | --- | --- |
| 6358 | **RHD4-02-002-Z7-C032-Information and Communication Technologies - ICT** | 2026-08-17 → 2027-02-20 (+187d) | 2027-01-25 → 2027-08-21 (+208d) |  |  |
| 6359 | **RHD4-02-002-C032-(ICT)-Information and Communication Technologies Ducts** | 2026-12-28 → 2027-07-24 (+208d) | 2027-01-25 → 2027-08-21 (+208d) |  |  |
| RHD4CZ7C032ICT2100 | Excavation of HDPE Ducts for ICT Network - (RD-C-3/2)-Z7-C032-ICT | 2026-12-28 → 2027-07-24 (+208d) | 2027-01-03 → 2027-07-29 (+207d) |  |  |
| RHD4CZ7C032ICT2200 | Installation of HDPE Ducts for ICT Network - (RD-C-3/2)-Z7-C032-ICT | 2027-01-04 → 2027-07-31 (+208d) | 2027-01-13 → 2027-08-09 (+208d) |  |  |
| RHD4CZ7C032ICT2400 | Backfilling of HDPE Ducts for ICT Network - (RD-C-3/2)-Z7-C032-ICT | 2027-01-19 → 2027-08-15 (+208d) | 2027-01-25 → 2027-08-21 (+208d) |  |  |
| 6360 | **RHD4-02-002-C032-(ICT)-Information and Communication Technologies Manholes** | 2027-01-14 → 2027-08-10 (+208d) | 2027-01-18 → 2027-08-14 (+208d) |  |  |
| RHD4CZ7C032ICT5100 | Excavation for Manholes for ICT Network - (RD-C-3/2)-Z7-C032-ICT | 2027-01-14 → 2027-08-10 (+208d) | 2027-01-16 → 2027-08-11 (+207d) |  |  |
| RHD4CZ7C032ICT5200 | Installation of Manholes for ICT Network - (RD-C-3/2)-Z7-C032-ICT | 2027-01-17 → 2027-08-12 (+207d) | 2027-01-18 → 2027-08-14 (+208d) |  |  |
| 6361 | **RHD4-02-002-C032-(ICT)-Information and Communication Technologies Road Crossings** | 2026-08-17 → 2027-02-20 (+187d) | 2026-08-25 → 2027-03-01 (+188d) |  |  |
| RHD4CZ7C032ICT3100 | Excavation for Road Crossings for ICT Network - (RD-C-3/2)-Z7-C032-ICT | 2026-08-17 → 2027-02-20 (+187d) | 2026-08-18 → 2027-02-21 (+187d) |  |  |
| RHD4CZ7C032ICT3200 | Installation of Road Crossings for ICT Network - (RD-C-3/2)-Z7-C032-ICT | 2026-08-19 → 2027-02-23 (+188d) | 2026-08-20 → 2027-02-24 (+188d) |  |  |
| RHD4CZ7C032ICT3300 | Pouring of Road Crossings for ICT Network - (RD-C-3/2)-Z7-C032-ICT | 2026-08-22 → 2027-02-25 (+187d) | 2026-08-23 → 2027-02-27 (+188d) |  |  |
| RHD4CZ7C032ICT3400 | Backfilling of Road Crossings for ICT Network - (RD-C-3/2)-Z7-C032-ICT | 2026-08-24 → 2027-02-28 (+188d) | 2026-08-25 → 2027-03-01 (+188d) |  |  |
| 6362 | **RHD4-02-002-Z7-C032-Security Network - CCTV** | 2027-01-26 → 2027-08-22 (+208d) | 2027-03-01 → 2027-09-25 (+208d) |  |  |
| 6363 | **RHD4-02-002-C032-(CCTV)-Civil Works** | 2027-01-26 → 2027-08-22 (+208d) | 2027-01-31 → 2027-08-26 (+207d) |  |  |
| RHD4CZ7C032CCTV2100 | Civil Works for Security Network - (RD-C-3/2)-Z7-C032-CCTV | 2027-01-26 → 2027-08-22 (+208d) | 2027-01-31 → 2027-08-26 (+207d) |  |  |
| 6364 | **RHD4-02-002-C032-(CCTV)-CCTV Poles** | 2027-02-01 → 2027-08-28 (+208d) | 2027-02-11 → 2027-09-07 (+208d) |  |  |
| RHD4CZ7C032CCTV1100 | Excavation for RC Base for CCTV Poles for Security Network - (RD-C-3/2)-Z7-C032-CCTV | 2027-02-01 → 2027-08-28 (+208d) | 2027-02-02 → 2027-08-29 (+208d) |  |  |
| RHD4CZ7C032CCTV1200 | Installation for RC Base for CCTV Poles for Security Network - (RD-C-3/2)-Z7-C032-CCTV | 2027-02-03 → 2027-08-30 (+208d) | 2027-02-04 → 2027-08-31 (+208d) |  |  |
| RHD4CZ7C032CCTV1300 | Backfill for RC Base for CCTV Poles for Security Network - (RD-C-3/2)-Z7-C032-CCTV | 2027-02-06 → 2027-09-01 (+207d) | 2027-02-07 → 2027-09-02 (+207d) |  |  |
| RHD4CZ7C032CCTV1400 | Installation for CCTV Poles for Security Network - (RD-C-3/2)-Z7-C032-CCTV | 2027-02-08 → 2027-09-04 (+208d) | 2027-02-09 → 2027-09-05 (+208d) |  |  |
| RHD4CZ7C032CCTV1500 | Protection post Installation for CCTV Poles for Security Network - (RD-C-3/2)-Z7-C032-CCTV | 2027-02-10 → 2027-09-06 (+208d) | 2027-02-11 → 2027-09-07 (+208d) |  |  |
| 6365 | **RHD4-02-002-C032-(CCTV)-Camera** | 2027-02-13 → 2027-09-08 (+207d) | 2027-02-14 → 2027-09-09 (+207d) |  |  |
| RHD4CZ7C032CCTV3100 | Installation for Cameras for Security Network - (RD-C-3/2)-Z7-C032-CCTV | 2027-02-13 → 2027-09-08 (+207d) | 2027-02-14 → 2027-09-09 (+207d) |  |  |
| 6366 | **RHD4-02-002-C032-(CCTV)-Power and Infrastructure** | 2027-02-25 → 2027-09-20 (+207d) | 2027-03-01 → 2027-09-25 (+208d) |  |  |
| RHD4CZ7C032CCTV4100 | Installation of Power outlet, UPS and midspan for PTZ Camerafor Cameras for Security Network - (RD-C-3/2)-Z7-C032-CCTV | 2027-02-25 → 2027-09-20 (+207d) | 2027-02-27 → 2027-09-21 (+206d) |  |  |
| RHD4CZ7C032CCTV4200 | Short Range Wireless PoP wireless Bridgefor CCTV Poles for Security Network - (RD-C-3/2)-Z7-C032-CCTV | 2027-02-28 → 2027-09-22 (+206d) | 2027-03-01 → 2027-09-25 (+208d) |  |  |
| 6368 | **RHD4-02-002-C032-(CCTV)-CCTV Panels and Components** | 2027-02-15 → 2027-09-11 (+208d) | 2027-02-24 → 2027-09-19 (+207d) |  |  |
| RHD4CZ7C032CCTV6100 | Installation for CCTV Panels for Security Network - (RD-C-3/2)-Z7-C032-CCTV | 2027-02-15 → 2027-09-11 (+208d) | 2027-02-24 → 2027-09-19 (+207d) |  |  |
| 6379 | **RHD4-02-002-Z7-L03** | 2026-08-13 → 2026-07-28 (-16d) | 2027-07-07 → 2028-01-12 (+189d) |  |  |
| 6558 | **RHD4-02-002-Z7-L03-Road Works - RD** | 2026-08-27 → 2026-07-28 (-30d) | 2027-07-07 → 2028-01-12 (+189d) |  |  |
| 6559 | **RHD4-02-002-L03-(RD)-Subgrade** | 2026-08-27 → 2026-07-28 (-30d) | 2026-09-02 → 2026-08-03 (-30d) |  |  |
| RHD4CZ7L03RD1100 | Supply, lay and compaction subgrade compacted thickness 300 mm for Roads - (RD-L-3)-Z7-L03-RD(Completed) | 2026-08-27 → 2026-07-28 A (-30d) | 2026-09-02 → 2026-08-03 A (-30d) | 0% → 100% |  |
| 6560 | **RHD4-02-002-L03-(RD)-Aggregate Base Course** | 2026-09-03 → 2027-03-02 (+180d) | 2026-09-09 → 2027-03-08 (+180d) |  |  |
| RHD4CZ7L03RD2100 | Supply, lay and compaction Aggregate base course compacted thickness 300 mmfor Roads - (RD-L-3)-Z7-L03-RD | 2026-09-03 → 2027-03-02 (+180d) | 2026-09-09 → 2027-03-08 (+180d) |  |  |
| 6561 | **RHD4-02-002-L03-(RD)-Bituminous base course Two Layers, including (MC1)&(RC2)** | 2026-09-10 → 2027-03-13 (+184d) | 2027-05-30 → 2027-12-05 (+189d) |  |  |
| RHD4CZ7L03RD3100 | Supply, lay and Asphaltic base course including Prime Coat (MC1) for 1st Layer - (RD-L-3)-Z7-L03-RD | 2026-09-10 → 2027-03-13 (+184d) | 2026-09-12 → 2027-03-14 (+183d) |  | resources Skilled labor [14.27 h]; Unskilled Labor [85.92 h]; Equipment Opreator [214.76 h]; Bobcat [14.27 h]; Roller compactor [14.27 h]; Asphalt Paver [14.27 h]; Rubber Compactor [28.64 h]; MC1/RC2 Sprinkler [14.27 h]; Dump Truck [128.83 h]; Bituminous base course (Grading I - Class A), including Prime coat (MC1) & tack coate (RC2) [523.68 m3] → Skilled labor [14.27 h]; Unskilled Labor [85.92 h]; Equipment Opreator [214.76 h]; Bobcat [14.27 h]; Roller compactor [14.27 h]; Asphalt Paver [14.27 h]; Rubber Compactor [28.64 h]; MC1/RC2 Sprinkler [14.27 h]; Dump Truck [128.8 h]; Bituminous base course (Grading I - Class A), including Prime coat (MC1) & tack coate (RC2) [523.68 m3] |
| RHD4CZ7L03RD3200 | Supply, lay and Asphaltic base course including Tack Coat (RC2) for 2nd Layer - (RD-L-3)-Z7-L03-RD | 2027-05-29 → 2027-12-04 (+189d) | 2027-05-30 → 2027-12-05 (+189d) |  | resources Skilled labor [14.27 h]; Unskilled Labor [85.92 h]; Equipment Opreator [214.76 h]; Bobcat [14.27 h]; Roller compactor [14.27 h]; Asphalt Paver [14.27 h]; Rubber Compactor [28.64 h]; MC1/RC2 Sprinkler [14.27 h]; Dump Truck [128.83 h]; Bituminous base course (Grading I - Class A), including Prime coat (MC1) & tack coate (RC2) [523.68 m3] → Skilled labor [14.27 h]; Unskilled Labor [85.92 h]; Equipment Opreator [214.76 h]; Bobcat [14.27 h]; Roller compactor [14.27 h]; Asphalt Paver [14.27 h]; Rubber Compactor [28.64 h]; MC1/RC2 Sprinkler [14.27 h]; Dump Truck [128.8 h]; Bituminous base course (Grading I - Class A), including Prime coat (MC1) & tack coate (RC2) [523.68 m3] |
| 6563 | **RHD4-02-002-L03-(RD)-Precast Concrete Curb** | 2027-05-31 → 2027-12-06 (+189d) | 2027-06-09 → 2027-12-15 (+189d) |  |  |
| RHD4CZ7L03RD5100 | Supply and installation Precast Concrete Kerb for Roads - (RD-L-3)-Z7-L03-RD | 2027-05-31 → 2027-12-06 (+189d) | 2027-06-09 → 2027-12-15 (+189d) |  |  |
| 6566 | **RHD4-02-002-L03-(RD)-Traffic Signage** | 2027-06-10 → 2027-12-16 (+189d) | 2027-06-17 → 2027-12-23 (+189d) |  |  |
| RHD4CZ7L03RD8100 | Installation of Traffic Signage for Road Network - (RD-L-3)-Z7-L03-RD | 2027-06-10 → 2027-12-16 (+189d) | 2027-06-17 → 2027-12-23 (+189d) |  |  |
| 6564 | **RHD4-02-002-L03-(RD)-Precast Interlocking Block Pavers** | 2027-06-19 → 2027-12-25 (+189d) | 2027-06-29 → 2028-01-04 (+189d) |  |  |
| RHD4CZ7L03RD6100 | Interlocking block pavers for sidewalk-footpath for Side walks and Parking areas - (RD-L-3)-Z7-L03-RD | 2027-06-19 → 2027-12-25 (+189d) | 2027-06-29 → 2028-01-04 (+189d) |  | resources Skilled labor [217.59 h]; Unskilled Labor [326.27 h]; Equipment Opreator [353.5 h]; Boom Truck [108.79 h]; Bobcat [108.79 h]; Concrete Mixer Truck [108.79 h]; Water Truck [27.23 h]; Interlock 80 mm thick Pavers for parking including sand fill [2497 m2] → Skilled labor [217.6 h]; Unskilled Labor [326.27 h]; Equipment Opreator [353.5 h]; Boom Truck [108.8 h]; Bobcat [108.8 h]; Concrete Mixer Truck [108.8 h]; Water Truck [27.2 h]; Interlock 80 mm thick Pavers for parking including sand fill [2497 m2] |
| 6562 | **RHD4-02-002-L03-(RD)-Bituminous concrete wearing course including tack coat (RC2)** | 2027-06-30 → 2028-01-05 (+189d) | 2027-07-01 → 2028-01-06 (+189d) |  |  |
| RHD4CZ7L03RD4100 | Supply, lay and compaction Asphaltic wearing course including tack Coat (RC2)for Road Network - (RD-L-3)-Z7-L03-RD | 2027-06-30 → 2028-01-05 (+189d) | 2027-07-01 → 2028-01-06 (+189d) |  |  |
| 6565 | **RHD4-02-002-L03-(RD)-Pavement Marking** | 2027-07-03 → 2028-01-08 (+189d) | 2027-07-07 → 2028-01-12 (+189d) |  |  |
| RHD4CZ7L03RD7100 | Pavement Markings for Road Network - (RD-L-3)-Z7-L03-RD | 2027-07-03 → 2028-01-08 (+189d) | 2027-07-07 → 2028-01-12 (+189d) |  |  |
| 6383 | **RHD4-02-002-Z7-L03-Storm Network - ST** | 2026-08-13 → 2026-08-04 (-9d) | 2027-01-28 → 2027-05-23 (+115d) |  |  |
| 6402 | **RHD4-02-002-L03-(ST)-MH Works - 2000 mm diameter** | 2026-12-29 → 2026-08-04 (-147d) | 2027-01-09 → 2027-04-26 (+107d) |  |  |
| RHD4CZ7L03ST3102 | Excavation and PC Blinding works for MH 2000 mm - (RD-L-3)-Z7-L03-ST | 2026-12-29 → 2026-08-04 A (-147d) | 2026-12-30 → 2026-08-06 A (-146d) | 0% → 100% | resources Skilled labor [7.3 h]; Unskilled Labor [7.3 h]; Equipment Opreator [11.65 h]; Excavator-Poclain [7.3 h]; Water Truck [0.76 h]; Dump Truck [3.59 h]; MH (2000mm Diameter) - ST - depth 1.50 - 2.5m [0.5 nr] → Skilled labor [7.3 h]; Unskilled Labor [7.3 h]; Equipment Opreator [11.65 h]; Excavator-Poclain [7.3 h]; Water Truck [0.8 h]; Dump Truck [3.59 h]; MH (2000mm Diameter) - ST - depth 1.50 - 2.5m [0.5 nr] |
| RHD4CZ7L03ST3202 | Installation of Base for MH 2000 mm - (RD-L-3)-Z7-L03-ST | 2026-12-31 → 2026-08-06 A (-147d) | 2027-01-02 → 2026-08-08 A (-147d) | 0% → 100% |  |
| RHD4CZ7L03ST3302 | MH Ring and C.Slab works and Backfilling works for MH 2000 mm - (RD-L-3)-Z7-L03-ST | 2027-01-03 → 2027-04-20 (+107d) | 2027-01-04 → 2027-04-21 (+107d) |  |  |
| RHD4CZ7L03ST3402 | Steel Cover for MH 2000 mm - (RD-L-3)-Z7-L03-ST | 2027-01-05 → 2027-04-22 (+107d) | 2027-01-06 → 2027-04-24 (+108d) |  |  |
| RHD4CZ7L03ST3502 | Finishing, Benching, Testing works for MH 2000 mm - (RD-L-3)-Z7-L03-ST | 2027-01-07 → 2027-04-25 (+108d) | 2027-01-09 → 2027-04-26 (+107d) |  |  |
| 3743 | **RHD4-02-002-L03-(ST)-GRP Pipes - 1100 mm diameter** | 2026-12-13 → 2026-08-04 (-131d) | 2026-12-23 → 2027-04-19 (+117d) |  |  |
| RHD4CZ7L03ST1107 | Excavation works for GRP Pipe Line 1100 mm - (RD-L-3)-Z7-L03-ST | 2026-12-13 → 2026-08-04 A (-131d) | 2026-12-14 → 2026-08-05 A (-131d) | 0% → 100% | resources Skilled labor [3.92 h]; Unskilled Labor [3.92 h]; Equipment Opreator [4.68 h]; Excavator-Poclain [3.92 h]; Dump Truck [0.76 h]; GRP (1100mm Diameter) - ST - Depth: 1.51m - 2.5m [10.76 m] → Skilled labor [3.92 h]; Unskilled Labor [3.92 h]; Equipment Opreator [4.68 h]; Excavator-Poclain [3.92 h]; Dump Truck [0.8 h]; GRP (1100mm Diameter) - ST - Depth: 1.51m - 2.5m [10.76 m] |
| RHD4CZ7L03ST1207 | Bedding works for GRP Pipe Line 1100 mm - (RD-L-3)-Z7-L03-ST | 2026-12-15 → 2026-08-06 A (-131d) | 2026-12-16 → 2026-08-08 A (-130d) | 0% → 100% |  |
| RHD4CZ7L03ST1307 | Installing for GRP Pipe Line 1100 mm - (RD-L-3)-Z7-L03-ST | 2026-12-17 → 2027-04-13 (+117d) | 2026-12-19 → 2027-04-14 (+116d) |  |  |
| RHD4CZ7L03ST1407 | Primary Test for GRP Pipe Line 1100 mm - (RD-L-3)-Z7-L03-ST | 2026-12-20 → 2027-04-15 (+116d) | 2026-12-21 → 2027-04-17 (+117d) |  |  |
| RHD4CZ7L03ST1507 | Backfilling and warning tape works for GRP Pipe Line 1100 mm - (RD-L-3)-Z7-L03-ST | 2026-12-22 → 2027-04-18 (+117d) | 2026-12-23 → 2027-04-19 (+117d) |  |  |
| 5254 | **RHD4-02-002-L03-(ST)-GRP Pipes - 900 mm diameter** | 2026-12-15 → 2026-08-04 (-133d) | 2026-12-26 → 2027-04-14 (+109d) |  |  |
| RHD4CZ7L03ST1105 | Excavation works for GRP Pipe Line 900 mm - (RD-L-3)-Z7-L03-ST | 2026-12-15 → 2026-08-04 A (-133d) | 2026-12-16 → 2026-08-05 A (-133d) | 0% → 100% |  |
| RHD4CZ7L03ST1205 | Bedding works for GRP Pipe Line 900 mm - (RD-L-3)-Z7-L03-ST | 2026-12-17 → 2026-08-06 A (-133d) | 2026-12-19 → 2026-08-08 A (-133d) | 0% → 100% | resources Skilled labor [2.4 h]; Unskilled Labor [4.79 h]; Equipment Opreator [4.79 h]; Excavator-Poclain [2.4 h]; Dump Truck [2.4 h]; GRP (900mm Diameter) - ST - Depth less than 1.5 m [4.9 m] → Skilled labor [2.4 h]; Unskilled Labor [4.8 h]; Equipment Opreator [4.8 h]; Excavator-Poclain [2.4 h]; Dump Truck [2.4 h]; GRP (900mm Diameter) - ST - Depth less than 1.5 m [4.9 m] |
| RHD4CZ7L03ST1305 | Installing for GRP Pipe Line 900 mm - (RD-L-3)-Z7-L03-ST | 2026-12-20 → 2026-08-09 A (-133d) | 2026-12-21 → 2026-08-10 A (-133d) | 0% → 100% |  |
| RHD4CZ7L03ST1505 | Backfilling and warning tape works for GRP Pipe Line 900 mm - (RD-L-3)-Z7-L03-ST | 2026-12-24 → 2026-09-15 A (-100d) | 2026-12-26 → 2026-09-16 A (-101d) | 0% → 100% |  |
| RHD4CZ7L03ST1405 | Primary Test for GRP Pipe Line 900 mm - (RD-L-3)-Z7-L03-ST | 2026-12-22 → 2027-04-13 (+112d) | 2026-12-23 → 2027-04-14 (+112d) |  |  |
| 6022 | **RHD4-02-002-L03-(ST)-MH Works - 1200 mm diameter** | 2027-01-06 → 2026-08-04 (-155d) | 2027-01-28 → 2027-05-23 (+115d) |  |  |
| RHD4CZ7L03ST3100 | Excavation and PC Blinding works for MH 1200 mm - (RD-L-3)-Z7-L03-ST | 2027-01-06 → 2026-08-04 A (-155d) | 2027-01-07 → 2026-10-27 A (-72d) | 0% → 100% |  |
| RHD4CZ7L03ST3200 | Installation of Base for MH 1200 mm - (RD-L-3)-Z7-L03-ST | 2027-01-09 → 2026-08-06 A (-156d) | 2027-01-10 → 2027-04-27 (+107d) | 0% → 65% | resources Skilled labor [10.02 h]; Unskilled Labor [10.02 h]; Equipment Opreator [4.03 h]; Boom Truck [1.96 h]; Concrete Mixer Truck [1.96 h]; MH (1200mm Diameter) - ST - depth less than 1.5 [0.25 nr]; MH (1200mm Diameter) - ST - depth 1.50 - 2.5m [0.5 nr] → Skilled labor [10.02 h]; Unskilled Labor [10.02 h]; Equipment Opreator [4 h]; Boom Truck [1.96 h]; Concrete Mixer Truck [1.96 h]; MH (1200mm Diameter) - ST - depth less than 1.5 [0.25 nr]; MH (1200mm Diameter) - ST - depth 1.50 - 2.5m [0.5 nr] |

| ID | Task | Start | Finish | Complete | Other |
| --- | --- | --- | --- | --- | --- |
| RHD4CZ7L03ST3300 | MH Ring and C.Slab works and Backfilling works for MH 1200 mm - (RD-L-3)-Z7-L03-ST | 2027-01-11 → 2027-04-28 (+107d) | 2027-01-12 → 2027-04-29 (+107d) |  | resources Skilled labor [10.02 h]; Unskilled Labor [10.02 h]; Equipment Opreator [6.97 h]; Boom Truck [4.03 h]; Concrete Mixer Truck [3.05 h]; MH (1200mm Diameter) - ST - depth less than 1.5 [0.35 nr]; MH (1200mm Diameter) - ST - depth 1.50 - 2.5m [0.7 nr] → Skilled labor [10.02 h]; Unskilled Labor [10.02 h]; Equipment Opreator [6.97 h]; Boom Truck [4 h]; Concrete Mixer Truck [3.05 h]; MH (1200mm Diameter) - ST - depth less than 1.5 [0.35 nr]; MH (1200mm Diameter) - ST - depth 1.50 - 2.5m [0.7 nr] |
| RHD4CZ7L03ST3400 | Steel Cover for MH 1200 mm - (RD-L-3)-Z7-L03-ST | 2027-01-21 → 2027-05-11 (+110d) | 2027-01-23 → 2027-05-12 (+109d) |  |  |
| RHD4CZ7L03ST3500 | Finishing, Benching, Testing works for MH 1200 mm - (RD-L-3)-Z7-L03-ST | 2027-01-27 → 2027-05-22 (+115d) | 2027-01-28 → 2027-05-23 (+115d) |  |  |
| 6023 | **RHD4-02-002-L03-(ST)-MH Works - 1500 mm diameter** | 2026-12-31 → 2026-08-04 (-149d) | 2027-01-26 → 2027-05-20 (+114d) |  |  |
| RHD4CZ7L03ST3101 | Excavation and PC Blinding works for MH 1500 mm - (RD-L-3)-Z7-L03-ST | 2026-12-31 → 2026-08-04 A (-149d) | 2027-01-05 → 2027-04-25 (+110d) | 0% → 89% | resources Skilled labor [49.01 h]; Unskilled Labor [49.01 h]; Equipment Opreator [78.41 h]; Excavator-Poclain [49.01 h]; Water Truck [4.9 h]; Dump Truck [24.5 h]; MH (1500mm Diameter) - ST - depth 1.50 - 2.5m [2.25 nr] → Skilled labor [49.01 h]; Unskilled Labor [49.01 h]; Equipment Opreator [78.4 h]; Excavator-Poclain [49.01 h]; Water Truck [4.9 h]; Dump Truck [24.5 h]; MH (1500mm Diameter) - ST - depth 1.50 - 2.5m [2.25 nr] |
| RHD4CZ7L03ST3201 | Installation of Base for MH 1500 mm - (RD-L-3)-Z7-L03-ST | 2027-01-06 → 2026-08-06 A (-153d) | 2027-01-11 → 2027-05-01 (+110d) | 0% → 56% |  |
| RHD4CZ7L03ST3301 | MH Ring and C.Slab works and Backfilling works for MH 1500 mm - (RD-L-3)-Z7-L03-ST | 2027-01-12 → 2027-05-02 (+110d) | 2027-01-17 → 2027-05-06 (+109d) |  |  |
| RHD4CZ7L03ST3401 | Steel Cover for MH 1500 mm - (RD-L-3)-Z7-L03-ST | 2027-01-18 → 2027-05-08 (+110d) | 2027-01-20 → 2027-05-10 (+110d) |  |  |
| RHD4CZ7L03ST3501 | Finishing, Benching, Testing works for MH 1500 mm - (RD-L-3)-Z7-L03-ST | 2027-01-21 → 2027-05-11 (+110d) | 2027-01-26 → 2027-05-20 (+114d) |  |  |
| 6014 | **RHD4-02-002-L03-(ST)-GRP Pipes - 1200 mm diameter** |  | 2026-08-24 → 2027-02-16 (+176d) |  |  |
| RHD4CZ7L03ST1108 | Excavation works for GRP Pipe Line 1200 mm - (RD-L-3)-Z7-L03-ST | 2026-08-13 A | 2026-08-15 → 2026-08-17 A (+2d) | 0% → 100% |  |
| RHD4CZ7L03ST1208 | Bedding works for GRP Pipe Line 1200 mm - (RD-L-3)-Z7-L03-ST | 2026-08-16 → 2027-02-08 (+176d) | 2026-08-17 → 2027-02-09 (+176d) |  |  |
| RHD4CZ7L03ST1308 | Installing for GRP Pipe Line 1200 mm - (RD-L-3)-Z7-L03-ST | 2026-08-18 → 2027-02-10 (+176d) | 2026-08-19 → 2027-02-11 (+176d) |  |  |
| RHD4CZ7L03ST1408 | Primary Test for GRP Pipe Line 1200 mm - (RD-L-3)-Z7-L03-ST | 2026-08-20 → 2027-02-13 (+177d) | 2026-08-22 → 2027-02-14 (+176d) |  |  |
| RHD4CZ7L03ST1508 | Backfilling and warning tape works for GRP Pipe Line 1200 mm - (RD-L-3)-Z7-L03-ST | 2026-08-23 → 2027-02-15 (+176d) | 2026-08-24 → 2027-02-16 (+176d) |  |  |
| 6010 | **RHD4-02-002-L03-(ST)-GRP Pipes - 800 mm diameter** | 2026-12-17 → 2026-08-04 (-135d) | 2026-12-29 → 2027-04-25 (+117d) |  |  |
| RHD4CZ7L03ST1104 | Excavation works for GRP Pipe Line 800 mm - (RD-L-3)-Z7-L03-ST | 2026-12-17 → 2026-08-04 A (-135d) | 2026-12-19 → 2027-04-14 (+116d) | 0% → 39% | resources Skilled labor [20.36 h]; Unskilled Labor [20.36 h]; Equipment Opreator [24.39 h]; Excavator-Poclain [20.36 h]; Dump Truck [4.03 h]; GRP (800mm Diameter) - ST - Depth less than 1.5 m [42.65 m]; GRP (800mm Diameter) - ST - Depth: 1.51m - 2.5m → Skilled labor [20.36 h]; Unskilled Labor [20.36 h]; Equipment Opreator [24.39 h]; Excavator-Poclain [20.36 h]; Dump Truck [4 h]; GRP (800mm Diameter) - ST - Depth less than 1.5 m [42.65 m]; GRP (800mm Diameter) - ST - Depth: 1.51m - 2.5m |
| RHD4CZ7L03ST1204 | Bedding works for GRP Pipe Line 800 mm - (RD-L-3)-Z7-L03-ST | 2026-12-20 → 2026-08-06 A (-136d) | 2026-12-21 → 2027-04-17 (+117d) | 0% → 47% |  |
| RHD4CZ7L03ST1304 | Installing for GRP Pipe Line 800 mm - (RD-L-3)-Z7-L03-ST | 2026-12-22 → 2026-08-08 A (-136d) | 2026-12-23 → 2027-04-19 (+117d) | 0% → 49% |  |
| RHD4CZ7L03ST1504 | Backfilling and warning tape works for GRP Pipe Line 800 mm - (RD-L-3)-Z7-L03-ST | 2026-12-27 → 2026-09-16 A (-102d) | 2026-12-29 → 2027-04-25 (+117d) | 0% → 46% |  |
| RHD4CZ7L03ST1404 | Primary Test for GRP Pipe Line 800 mm - (RD-L-3)-Z7-L03-ST | 2026-12-24 → 2027-04-20 (+117d) | 2026-12-26 → 2027-04-21 (+116d) |  |  |
| 6008 | **RHD4-02-002-L03-(ST)-GRP Pipes - 600 mm diameter** | 2026-12-22 → 2026-08-04 (-140d) | 2027-01-02 → 2027-04-24 (+112d) |  |  |
| RHD4CZ7L03ST1102 | Excavation works for GRP Pipe Line 600 mm - (RD-L-3)-Z7-L03-ST | 2026-12-22 → 2026-08-04 A (-140d) | 2026-12-23 → 2026-08-05 A (-140d) | 0% → 100% |  |
| RHD4CZ7L03ST1202 | Bedding works for GRP Pipe Line 600 mm - (RD-L-3)-Z7-L03-ST | 2026-12-24 → 2026-08-06 A (-140d) | 2026-12-26 → 2026-08-08 A (-140d) | 0% → 100% |  |
| RHD4CZ7L03ST1302 | Installing for GRP Pipe Line 600 mm - (RD-L-3)-Z7-L03-ST | 2026-12-27 → 2026-08-09 A (-140d) | 2026-12-28 → 2026-08-10 A (-140d) | 0% → 100% |  |
| RHD4CZ7L03ST1502 | Backfilling and warning tape works for GRP Pipe Line 600 mm - (RD-L-3)-Z7-L03-ST | 2026-12-31 → 2026-09-19 A (-103d) | 2027-01-02 → 2026-09-20 A (-104d) | 0% → 100% |  |
| RHD4CZ7L03ST1402 | Primary Test for GRP Pipe Line 600 mm - (RD-L-3)-Z7-L03-ST | 2026-12-29 → 2027-04-22 (+114d) | 2026-12-30 → 2027-04-24 (+115d) |  |  |
| 6006 | **RHD4-02-002-L03-(ST)-GRP Pipes - 400 mm diameter** | 2026-12-24 → 2026-08-04 (-142d) | 2027-01-04 → 2027-04-26 (+112d) |  |  |
| RHD4CZ7L03ST1100 | Excavation works for GRP Pipe Line 400 mm - (RD-L-3)-Z7-L03-ST | 2026-12-24 → 2026-08-04 A (-142d) | 2026-12-26 → 2027-04-17 (+112d) | 0% → 45% |  |
| RHD4CZ7L03ST1200 | Bedding works for GRP Pipe Line 400 mm - (RD-L-3)-Z7-L03-ST | 2026-12-27 → 2026-08-06 A (-143d) | 2026-12-28 → 2027-04-19 (+112d) | 0% → 45% |  |
| RHD4CZ7L03ST1300 | Installing for GRP Pipe Line 400 mm - (RD-L-3)-Z7-L03-ST | 2026-12-29 → 2026-08-08 A (-143d) | 2026-12-30 → 2027-04-21 (+112d) | 0% → 45% |  |
| RHD4CZ7L03ST1500 | Backfilling and warning tape works for GRP Pipe Line 400 mm - (RD-L-3)-Z7-L03-ST | 2027-01-03 → 2026-09-19 A (-106d) | 2027-01-04 → 2027-04-26 (+112d) | 0% → 45% |  |
| RHD4CZ7L03ST1400 | Primary Test for GRP Pipe Line 400 mm - (RD-L-3)-Z7-L03-ST | 2026-12-31 → 2027-04-22 (+112d) | 2027-01-02 → 2027-04-24 (+112d) |  |  |
| 3739 | **RHD4-02-002-L03-(ST)-GRP Pipes - 700 mm diameter** | 2026-12-20 → 2026-08-04 (-138d) | 2026-12-30 → 2027-04-17 (+108d) |  |  |
| RHD4CZ7L03ST1103 | Excavation works for GRP Pipe Line 700 mm - (RD-L-3)-Z7-L03-ST | 2026-12-20 → 2026-08-04 A (-138d) | 2026-12-21 → 2026-08-05 A (-138d) | 0% → 100% |  |
| RHD4CZ7L03ST1203 | Bedding works for GRP Pipe Line 700 mm - (RD-L-3)-Z7-L03-ST | 2026-12-22 → 2026-08-06 A (-138d) | 2026-12-23 → 2026-08-08 A (-137d) | 0% → 100% |  |
| RHD4CZ7L03ST1303 | Installing for GRP Pipe Line 700 mm - (RD-L-3)-Z7-L03-ST | 2026-12-24 → 2026-08-09 A (-137d) | 2026-12-26 → 2026-08-10 A (-138d) | 0% → 100% | resources Unskilled Labor [3.27 h]; Plumber [1.63 h]; GRP (700mm Diameter) - ST - Depth less than 1.5 m [30.76 m] → Unskilled Labor [3.27 h]; Plumber [1.6 h]; GRP (700mm Diameter) - ST - Depth less than 1.5 m [30.76 m] |
| RHD4CZ7L03ST1503 | Backfilling and warning tape works for GRP Pipe Line 700 mm - (RD-L-3)-Z7-L03-ST | 2026-12-29 → 2026-09-19 A (-101d) | 2026-12-30 → 2026-09-20 A (-101d) | 0% → 100% |  |
| RHD4CZ7L03ST1403 | Primary Test for GRP Pipe Line 700 mm - (RD-L-3)-Z7-L03-ST | 2026-12-27 → 2027-04-15 (+109d) | 2026-12-28 → 2027-04-17 (+110d) |  | resources Unskilled Labor [1.63 h]; Plumber [1.63 h]; Equipment Opreator [1.63 h]; Water Truck [1.63 h]; GRP (700mm Diameter) - ST - Depth less than 1.5 m [13.67 m] → Unskilled Labor [1.6 h]; Plumber [1.6 h]; Equipment Opreator [1.6 h]; Water Truck [1.6 h]; GRP (700mm Diameter) - ST - Depth less than 1.5 m [13.67 m] |
| 6398 | **RHD4-02-002-L03-(ST)-UPVC Pipes - 300 mm diameter** | 2026-12-27 → 2026-08-23 (-126d) | 2027-01-07 → 2027-04-29 (+112d) |  |  |
| RHD4CZ7L03ST2100 | Excavation works for UPVC Pipe Line 300 mm - (RD-L-3)-Z7-L03-ST | 2026-12-27 → 2026-08-23 A (-126d) | 2026-12-28 → 2027-04-19 (+112d) | 0% → 74% | resources Skilled labor [20.69 h]; Unskilled Labor [20.69 h]; Equipment Opreator [24.83 h]; Excavator-Poclain [20.69 h]; Dump Truck [4.14 h]; UPVC (300mm Diameter) - ST - Depth less than 1.5 [47.5 m]; UPVC (300mm Diameter) - ST - Depth: 1.51m - 2.5m → Skilled labor [20.69 h]; Unskilled Labor [20.69 h]; Equipment Opreator [24.8 h]; Excavator-Poclain [20.69 h]; Dump Truck [4.14 h]; UPVC (300mm Diameter) - ST - Depth less than 1.5 [47.5 m]; UPVC (300mm Diameter) - ST - Depth: 1.51m - 2.5m |
| RHD4CZ7L03ST2200 | Bedding works for UPVC Pipe Line 300 mm - (RD-L-3)-Z7-L03-ST | 2026-12-29 → 2026-08-25 A (-126d) | 2026-12-30 → 2027-04-21 (+112d) | 0% → 74% |  |
| RHD4CZ7L03ST2300 | Installing for UPVC Pipe Line 300 mm - (RD-L-3)-Z7-L03-ST | 2026-12-31 → 2026-08-29 A (-124d) | 2027-01-02 → 2027-04-24 (+112d) | 0% → 55% |  |
| RHD4CZ7L03ST2400 | Primary Test for UPVC Pipe Line 300 mm - (RD-L-3)-Z7-L03-ST | 2027-01-03 → 2027-04-25 (+112d) | 2027-01-04 → 2027-04-26 (+112d) |  |  |
| RHD4CZ7L03ST2500 | Backfilling and warning tape works for UPVC Pipe Line 300 mm - (RD-L-3)-Z7-L03-ST | 2027-01-05 → 2027-04-27 (+112d) | 2027-01-07 → 2027-04-29 (+112d) |  |  |
| 6406 | **RHD4-02-002-L03-(ST)-Concrete Encasement** | 2026-12-31 → 2026-09-15 (-107d) | 2027-01-02 → 2027-04-24 (+112d) |  |  |
| RHD4CZ7L03ST6100 | Pipe Encasement for Storm Pipelines - (RD-L-3)-Z7-L03-ST | 2026-12-31 → 2026-09-15 A (-107d) | 2027-01-02 → 2027-04-24 (+112d) | 0% → 30% | resources Skilled labor [19.17 h]; Unskilled Labor [19.17 h]; Equipment Opreator [21.13 h]; Concrete Mixer Truck [1.96 h]; Dump Truck [19.17 h]; Pipe Encasement - ST [352.14 m3] → Skilled labor [19.2 h]; Unskilled Labor [19.2 h]; Equipment Opreator [21.13 h]; Concrete Mixer Truck [1.96 h]; Dump Truck [19.2 h]; Pipe Encasement - ST [352.14 m3] |
| 6407 | **RHD4-02-002-Z7-L03-Catch Basin - ST** | 2026-12-31 → 2026-08-25 (-128d) | 2027-01-20 → 2027-05-10 (+110d) |  |  |
| 6408 | **RHD4-02-002-L03-(ST)-Single Catch Basin Works** | 2026-12-31 → 2026-08-25 (-128d) | 2027-01-20 → 2027-05-10 (+110d) |  |  |
| RHD4CZ7L03ST7100 | Excavation works for Single Catch Basin - (RD-L-3)-Z7-L03-ST | 2026-12-31 → 2026-08-25 A (-128d) | 2027-01-03 → 2027-04-22 (+109d) | 0% → 76% | resources Skilled labor [27.23 h]; Unskilled Labor [54.45 h]; Equipment Opreator [40.84 h]; Excavator-Poclain [27.23 h]; Dump Truck [13.61 h]; Single Catch basin - ST [6.25 nr] → Skilled labor [27.2 h]; Unskilled Labor [54.45 h]; Equipment Opreator [40.8 h]; Excavator-Poclain [27.2 h]; Dump Truck [13.6 h]; Single Catch basin - ST [6.25 nr] |
| RHD4CZ7L03ST7200 | PC Blinding, Installation and Pipe connection for Single Catch Basin - (RD-L-3)-Z7-L03-ST | 2027-01-04 → 2026-09-19 A (-107d) | 2027-01-06 → 2027-04-26 (+110d) | 0% → 76% | resources Skilled labor [27.23 h]; Unskilled Labor [54.45 h]; Plumber [13.61 h]; Equipment Opreator [5.45 h]; Boom Truck [5.45 h]; Single Catch basin - ST [5 nr] → Skilled labor [27.2 h]; Unskilled Labor [54.45 h]; Plumber [13.6 h]; Equipment Opreator [5.45 h]; Boom Truck [5.45 h]; Single Catch basin - ST [5 nr] |
| RHD4CZ7L03ST7300 | Rings & C.Slab & Final Backfill for Single Catch Basin - (RD-L-3)-Z7-L03-ST | 2027-01-07 → 2026-10-27 A (-72d) | 2027-01-11 → 2027-05-01 (+110d) | 0% → 68% | resources Skilled labor [34.09 h]; Unskilled Labor [68.06 h]; Equipment Opreator [40.84 h]; Boom Truck [6.86 h]; Bobcat [34.09 h]; Single Catch basin - ST [8.75 nr] → Skilled labor [34.09 h]; Unskilled Labor [68.06 h]; Equipment Opreator [40.8 h]; Boom Truck [6.86 h]; Bobcat [34.09 h]; Single Catch basin - ST [8.75 nr] |
| RHD4CZ7L03ST7400 | Steel Cover for Single Catch Basin - (RD-L-3)-Z7-L03-ST | 2027-01-12 → 2027-05-02 (+110d) | 2027-01-14 → 2027-05-04 (+110d) |  | resources Skilled labor [27.23 h]; Unskilled Labor [27.23 h]; Equipment Opreator [5.45 h]; Boom Truck [5.45 h]; Single Catch basin - ST [1.25 nr] → Skilled labor [27.2 h]; Unskilled Labor [27.2 h]; Equipment Opreator [5.45 h]; Boom Truck [5.45 h]; Single Catch basin - ST [1.25 nr] |
| RHD4CZ7L03ST7500 | Finishing and Insulation works for Single Catch Basin - (RD-L-3)-Z7-L03-ST | 2027-01-16 → 2027-05-05 (+109d) | 2027-01-20 → 2027-05-10 (+110d) |  |  |
| 6432 | **RHD4-02-002-Z7-L03-Sewage Network - SW** | 2027-01-09 → 2026-08-11 (-151d) | 2027-04-11 → 2027-07-07 (+87d) |  |  |
| 1 | **Wash out Chamber for HDPE force Main** | 2027-01-31 → 2027-05-07 (+96d) | 2027-02-07 → 2027-05-14 (+96d) |  |  |
| RHD4CZ7L03SW4100 | Excavation and Bedding for Wash out Chamber for HDPE force Main - (RD-L-3)-Z7-L03-SW | 2027-01-31 → 2027-05-07 (+96d) | 2027-02-01 → 2027-05-08 (+96d) |  |  |
| RHD4CZ7L03SW4200 | PC works for Wash out Chamber for HDPE force Main - (RD-L-3)-Z7-L03-SW | 2027-02-02 → 2027-05-09 (+96d) | 2027-02-03 → 2027-05-10 (+96d) |  |  |
| RHD4CZ7L03SW4300 | Installation for Wash out Chamber for HDPE force Main - (RD-L-3)-Z7-L03-SW | 2027-02-04 → 2027-05-11 (+96d) | 2027-02-05 → 2027-05-12 (+96d) |  |  |
| RHD4CZ7L03SW4400 | Backfilling works for Wash out Chamber for HDPE force Main - (RD-L-3)-Z7-L03-SW | 2027-02-06 → 2027-05-13 (+96d) | 2027-02-07 → 2027-05-14 (+96d) |  |  |
| 2 | **Wash out Valves** | 2027-01-31 → 2027-05-27 (+116d) | 2027-02-09 → 2027-05-30 (+110d) |  |  |
| RHD4CZ7L03SW5100 | Installation for Wash out Valves for HDPE force Main - (RD-L-3)-Z7-L03-SW | 2027-01-31 → 2027-05-27 (+116d) | 2027-02-01 → 2027-05-28 (+116d) |  |  |
| RHD4CZ7L03SW5200 | Stem and Service box for Wash out Valves for HDPE force Main - (RD-L-3)-Z7-L03-SW | 2027-02-08 → 2027-05-29 (+110d) | 2027-02-09 → 2027-05-30 (+110d) |  |  |
| 3 | **Air Valves** | 2027-01-31 → 2027-05-27 (+116d) | 2027-02-09 → 2027-05-30 (+110d) |  |  |
| RHD4CZ7L03SW5101 | Installation for Air Valves for HDPE force Main - (RD-L-3)-Z7-L03-SW | 2027-01-31 → 2027-05-27 (+116d) | 2027-02-01 → 2027-05-28 (+116d) |  |  |
| RHD4CZ7L03SW5201 | Stem and Service box for Air Valves for HDPE force Main - (RD-L-3)-Z7-L03-SW | 2027-02-08 → 2027-05-29 (+110d) | 2027-02-09 → 2027-05-30 (+110d) |  |  |
| 4 | **Air Valve Chamber** | 2027-01-31 → 2027-05-07 (+96d) | 2027-02-07 → 2027-05-25 (+107d) |  |  |
| RHD4CZ7L03SW4101 | Excavation and Bedding for Air Valve Chamber for HDPE force Main - (RD-L-3)-Z7-L03-SW | 2027-01-31 → 2027-05-07 (+96d) | 2027-02-01 → 2027-05-08 (+96d) |  |  |
| RHD4CZ7L03SW4201 | PC works for Air Valve Chamber for HDPE force Main - (RD-L-3)-Z7-L03-SW | 2027-02-02 → 2027-05-09 (+96d) | 2027-02-03 → 2027-05-10 (+96d) |  |  |
| RHD4CZ7L03SW4301 | Installation for Air Valve Chamber for HDPE force Main - (RD-L-3)-Z7-L03-SW | 2027-02-04 → 2027-05-11 (+96d) | 2027-02-05 → 2027-05-12 (+96d) |  |  |

| ID | Task | Start | Finish | Complete | Other |
| --- | --- | --- | --- | --- | --- |
| RHD4CZ7L03SW4401 | Backfilling works for Air Valve Chamber for HDPE force Main - (RD-L-3)-Z7-L03-SW | 2027-02-06 → 2027-05-24 (+107d) | 2027-02-07 → 2027-05-25 (+107d) |  |  |
| 5 | **Discharge Chamber** | 2027-01-31 → 2027-05-07 (+96d) | 2027-02-07 → 2027-05-14 (+96d) |  |  |
| RHD4CZ7L03SW4103 | Excavation and Bedding for Discharge Chamber for HDPE force Main - (RD-L-3)-Z7-L03-SW | 2027-01-31 → 2027-05-07 (+96d) | 2027-02-01 → 2027-05-08 (+96d) |  |  |
| RHD4CZ7L03SW4203 | PC works for Discharge Chamber for HDPE force Main - (RD-L-3)-Z7-L03-SW | 2027-02-02 → 2027-05-09 (+96d) | 2027-02-03 → 2027-05-10 (+96d) |  |  |
| RHD4CZ7L03SW4303 | Installation for Discharge Chamber for HDPE force Main - (RD-L-3)-Z7-L03-SW | 2027-02-04 → 2027-05-11 (+96d) | 2027-02-05 → 2027-05-12 (+96d) |  |  |
| RHD4CZ7L03SW4403 | Backfilling works for Discharge Chamber for HDPE force Main - (RD-L-3)-Z7-L03-SW | 2027-02-06 → 2027-05-13 (+96d) | 2027-02-07 → 2027-05-14 (+96d) |  |  |
| 4358 | **RHD4-02-002-L03-(SW)-HDPE Pipes - 250 mm diameter** | 2027-01-13 → 2027-05-05 (+112d) | 2027-02-08 → 2027-06-05 (+117d) |  |  |
| RHD4CZ7L03SW2600 | Excavation works for HDPE Force Main Pipeline 250 mm - (RD-L-3)-Z7-L03-SW | 2027-01-13 → 2027-05-05 (+112d) | 2027-01-17 → 2027-05-09 (+112d) |  |  |
| RHD4CZ7L03SW2700 | Bedding works for HDPE Force Main Pipeline 250 mm - (RD-L-3)-Z7-L03-SW | 2027-01-18 → 2027-05-10 (+112d) | 2027-01-21 → 2027-05-13 (+112d) |  |  |
| RHD4CZ7L03SW2800 | Installing for HDPE Force Main Pipeline 250 mm - (RD-L-3)-Z7-L03-SW | 2027-01-23 → 2027-05-19 (+116d) | 2027-01-30 → 2027-05-26 (+116d) |  |  |
| RHD4CZ7L03SW2900 | Primary Test for HDPE Force Main Pipeline 250 mm - (RD-L-3)-Z7-L03-SW | 2027-01-31 → 2027-05-27 (+116d) | 2027-02-02 → 2027-05-30 (+117d) |  |  |
| RHD4CZ7L03SW3000 | Backfilling and warning tape works for HDPE Force Main Pipeline 250 mm - (RD-L-3)-Z7-L03-SW | 2027-02-03 → 2027-05-31 (+117d) | 2027-02-08 → 2027-06-05 (+117d) |  | resources Skilled labor [51.18 h]; Unskilled Labor [102.37 h]; Equipment Opreator [102.37 h]; Excavator-Poclain [51.18 h]; Dump Truck [51.18 h]; HDPE (250mm Diameter) - SW - in trenches depth:0- 1.5m [173.38 m]; HDPE (250mm Diameter) - SW - in trenches depth: 1.51 than 2.5m [10.8 m] → Skilled labor [51.2 h]; Unskilled Labor [102.4 h]; Equipment Opreator [102.4 h]; Excavator-Poclain [51.2 h]; Dump Truck [51.2 h]; HDPE (250mm Diameter) - SW - in trenches depth:0- 1.5m [173.38 m]; HDPE (250mm Diameter) - SW - in trenches depth: 1.51 than 2.5m [10.8 m] |
| 6442 | **RHD4-02-002-L03-(SW)-MH Works - 1200 mm diameter** | 2027-01-18 → 2026-08-11 (-160d) | 2027-04-11 → 2027-07-07 (+87d) |  |  |
| RHD4CZ7L03SW3100 | Excavation and PC Blinding works for MH 1200 mm - (RD-L-3)-Z7-L03-SW | 2027-01-18 → 2026-08-11 A (-160d) | 2027-01-28 → 2027-05-11 (+103d) | 0% → 70% | resources Skilled labor [107.05 h]; Unskilled Labor [107.05 h]; Equipment Opreator [171.31 h]; Excavator-Poclain [107.05 h]; Water Truck [10.67 h]; Dump Truck [53.58 h]; MH (1200mm Diameter) - SW - depth 0 - 1.5m [0.25 nr]; MH (1200mm Diameter) - SW - depth 1.51 - 2.5m [1.5 nr]; MH (1200mm Diameter) - SW - depth 2.51 - 3.5m [3 nr]; MH (1200mm Diameter) - SW - depth 3.51 -4.5m [0.25 nr] → Skilled labor [107.05 h]; Unskilled Labor [107.05 h]; Equipment Opreator [171.31 h]; Excavator-Poclain [107.05 h]; Water Truck [10.67 h]; Dump Truck [53.6 h]; MH (1200mm Diameter) - SW - depth 0 - 1.5m [0.25 nr]; MH (1200mm Diameter) - SW - depth 1.51 - 2.5m [1.5 nr]; MH (1200mm Diameter) - SW - depth 2.51 - 3.5m [3 nr]; MH (1200mm Diameter) - SW - depth 3.51 -4.5m [0.25 nr] |
| RHD4CZ7L03SW3200 | Installation of Base for MH 1200 mm - (RD-L-3)-Z7-L03-SW | 2027-01-30 → 2026-08-12 A (-171d) | 2027-02-17 → 2027-05-20 (+92d) | 0% → 70% |  |
| RHD4CZ7L03SW3300 | MH Ring and C.Slab works and Backfilling works for MH 1200 mm - (RD-L-3)-Z7-L03-SW | 2027-02-18 → 2027-05-22 (+93d) | 2027-03-14 → 2027-06-09 (+87d) |  |  |
| RHD4CZ7L03SW3400 | Steel Cover for MH 1200 mm - (RD-L-3)-Z7-L03-SW | 2027-03-15 → 2027-06-10 (+87d) | 2027-03-22 → 2027-06-17 (+87d) |  |  |
| RHD4CZ7L03SW3500 | Finishing, Benching, Testing works for MH 1200 mm - (RD-L-3)-Z7-L03-SW | 2027-03-23 → 2027-06-19 (+88d) | 2027-04-11 → 2027-07-07 (+87d) |  |  |
| 6434 | **RHD4-02-002-L03-(SW)-GRP Pipes - 400 mm diameter** | 2027-01-09 → 2027-05-01 (+112d) | 2027-01-19 → 2027-05-11 (+112d) |  |  |
| RHD4CZ7L03SW1101 | Excavation works for GRP Pipe Line 400 mm - (RD-L-3)-Z7-L03-SW | 2027-01-09 → 2027-05-01 (+112d) | 2027-01-10 → 2027-05-02 (+112d) |  |  |
| RHD4CZ7L03SW1201 | Bedding works for GRP Pipe Line 400 mm - (RD-L-3)-Z7-L03-SW | 2027-01-11 → 2027-05-03 (+112d) | 2027-01-12 → 2027-05-04 (+112d) |  |  |
| RHD4CZ7L03SW1301 | Installing for GRP Pipe Line 400 mm - (RD-L-3)-Z7-L03-SW | 2027-01-13 → 2027-05-05 (+112d) | 2027-01-14 → 2027-05-06 (+112d) |  |  |
| RHD4CZ7L03SW1401 | Primary Test for GRP Pipe Line 400 mm - (RD-L-3)-Z7-L03-SW | 2027-01-16 → 2027-05-08 (+112d) | 2027-01-17 → 2027-05-09 (+112d) |  |  |
| RHD4CZ7L03SW1501 | Backfilling and warning tape works for GRP Pipe Line 400 mm - (RD-L-3)-Z7-L03-SW | 2027-01-18 → 2027-05-10 (+112d) | 2027-01-19 → 2027-05-11 (+112d) |  |  |
| 6433 | **RHD4-02-002-L03-(SW)-GRP Pipes - 300 mm diameter** | 2027-01-11 → 2026-08-11 (-153d) | 2027-01-21 → 2027-05-13 (+112d) |  |  |
| RHD4CZ7L03SW1100 | Excavation works for GRP Pipe Line 300 mm - (RD-L-3)-Z7-L03-SW | 2027-01-11 → 2026-08-11 A (-153d) | 2027-01-12 → 2027-05-04 (+112d) | 0% → 62% |  |
| RHD4CZ7L03SW1200 | Bedding works for GRP Pipe Line 300 mm - (RD-L-3)-Z7-L03-SW | 2027-01-13 → 2026-08-13 A (-153d) | 2027-01-14 → 2027-05-06 (+112d) | 0% → 62% |  |
| RHD4CZ7L03SW1300 | Installing for GRP Pipe Line 300 mm - (RD-L-3)-Z7-L03-SW | 2027-01-16 → 2026-09-20 A (-118d) | 2027-01-17 → 2027-05-09 (+112d) | 0% → 62% |  |
| RHD4CZ7L03SW1400 | Primary Test for GRP Pipe Line 300 mm - (RD-L-3)-Z7-L03-SW | 2027-01-18 → 2027-05-10 (+112d) | 2027-01-19 → 2027-05-11 (+112d) |  |  |
| RHD4CZ7L03SW1500 | Backfilling and warning tape works for GRP Pipe Line 300 mm - (RD-L-3)-Z7-L03-SW | 2027-01-20 → 2027-05-12 (+112d) | 2027-01-21 → 2027-05-13 (+112d) |  |  |
| 6438 | **RHD4-02-002-L03-(SW)-UPVC Pipes - 200 mm diameter** | 2027-01-13 → 2026-08-11 (-155d) | 2027-01-30 → 2027-05-06 (+96d) |  |  |
| RHD4CZ7L03SW2100 | Excavation works for UPVC Pipe Line 200 mm - (RD-L-3)-Z7-L03-SW | 2027-01-13 → 2026-08-11 A (-155d) | 2027-01-16 → 2026-09-19 A (-119d) | 0% → 100% |  |
| RHD4CZ7L03SW2200 | Bedding works for UPVC Pipe Line 200 mm - (RD-L-3)-Z7-L03-SW | 2027-01-17 → 2026-08-12 A (-158d) | 2027-01-19 → 2026-09-21 A (-120d) | 0% → 100% |  |
| RHD4CZ7L03SW2300 | Installing for UPVC Pipe Line 200 mm - (RD-L-3)-Z7-L03-SW | 2027-01-20 → 2026-08-15 A (-158d) | 2027-01-24 → 2026-09-23 A (-123d) | 0% → 100% |  |
| RHD4CZ7L03SW2500 | Backfilling and warning tape works for UPVC Pipe Line 200 mm - (RD-L-3)-Z7-L03-SW | 2027-01-27 → 2026-08-17 A (-163d) | 2027-01-30 → 2026-10-27 A (-95d) | 0% → 100% |  |
| RHD4CZ7L03SW2400 | Primary Test for UPVC Pipe Line 200 mm - (RD-L-3)-Z7-L03-SW | 2027-01-25 → 2027-05-05 (+100d) | 2027-01-26 → 2027-05-06 (+100d) |  |  |
| 6469 | **RHD4-02-002-Z7-L03-Potable Network - PT** | 2027-01-31 → 2027-05-08 (+97d) | 2027-04-15 → 2027-07-21 (+97d) |  |  |
| 6470 | **RHD4-02-002-L03-(PT)-HDPE Pipes - 110 mm diameter** | 2027-02-06 → 2027-05-13 (+96d) | 2027-03-16 → 2027-06-21 (+97d) |  |  |
| RHD4CZ7L03PT1100 | Excavation works for HDPE Pipline 110 mm - (RD-L-3)-Z7-L03-PT | 2027-02-06 → 2027-05-13 (+96d) | 2027-02-07 → 2027-05-19 (+101d) |  |  |
| RHD4CZ7L03PT1200 | Bedding works for HDPE Pipline 110 mm - (RD-L-3)-Z7-L03-PT | 2027-02-10 → 2027-05-23 (+102d) | 2027-02-11 → 2027-05-24 (+102d) |  |  |
| RHD4CZ7L03PT1300 | Installing for HDPE Pipline 110 mm - (RD-L-3)-Z7-L03-PT | 2027-02-18 → 2027-05-31 (+102d) | 2027-02-20 → 2027-06-01 (+101d) |  |  |
| RHD4CZ7L03PT1400 | Primary Test for HDPE Pipline 110 mm - (RD-L-3)-Z7-L03-PT | 2027-03-04 → 2027-06-13 (+101d) | 2027-03-06 → 2027-06-14 (+100d) |  |  |
| RHD4CZ7L03PT1500 | Backfilling and warning tape works for HDPE Pipline 110 mm - (RD-L-3)-Z7-L03-PT | 2027-03-15 → 2027-06-20 (+97d) | 2027-03-16 → 2027-06-21 (+97d) |  | resources Skilled labor [8.82 h]; Unskilled Labor [17.53 h]; Equipment Opreator [17.53 h]; Excavator-Poclain [8.82 h]; Dump Truck [8.82 h]; HDPE (110mm Diameter) - PT - Depth: less than 1.5m [32.24 m] → Skilled labor [8.8 h]; Unskilled Labor [17.53 h]; Equipment Opreator [17.53 h]; Excavator-Poclain [8.8 h]; Dump Truck [8.8 h]; HDPE (110mm Diameter) - PT - Depth: less than 1.5m [32.24 m] |
| 6102 | **RHD4-02-002-L03-(PT)-Air Valve Chambers** | 2027-03-24 → 2027-06-29 (+97d) | 2027-04-01 → 2027-07-07 (+97d) |  |  |
| RHD4CZ7L03PT2102 | Excavation and Bedding for Air Valve Chambers for Potable Water Network - (RD-L-3)-Z7-L03-PT | 2027-03-24 → 2027-06-29 (+97d) | 2027-03-25 → 2027-06-30 (+97d) |  |  |
| RHD4CZ7L03PT2202 | PC works for Air Valve Chambers for Potable Water Network - (RD-L-3)-Z7-L03-PT | 2027-03-27 → 2027-07-01 (+96d) | 2027-03-28 → 2027-07-03 (+97d) |  |  |
| RHD4CZ7L03PT2302 | Installation for Air Valve Chambers for Potable Water Network - (RD-L-3)-Z7-L03-PT | 2027-03-29 → 2027-07-04 (+97d) | 2027-03-30 → 2027-07-05 (+97d) |  |  |
| RHD4CZ7L03PT2402 | Backfilling works for Air Valve Chambers for Potable Water Network - (RD-L-3)-Z7-L03-PT | 2027-03-31 → 2027-07-06 (+97d) | 2027-04-01 → 2027-07-07 (+97d) |  |  |
| 6103 | **RHD4-02-002-L03-(PT)-Air Valves** | 2027-03-31 → 2027-07-06 (+97d) | 2027-04-04 → 2027-07-10 (+97d) |  |  |
| RHD4CZ7L03PT3103 | Installation for Air Valves for Potable Water Network - (RD-L-3)-Z7-L03-PT | 2027-03-31 → 2027-07-06 (+97d) | 2027-04-01 → 2027-07-07 (+97d) |  |  |
| RHD4CZ7L03PT3203 | Stem and Service box for Air Valves for Potable Water Network - (RD-L-3)-Z7-L03-PT | 2027-04-03 → 2027-07-08 (+96d) | 2027-04-04 → 2027-07-10 (+97d) |  |  |
| 6478 | **RHD4-02-002-L03-(PT)-Wash out Valve Chambers** | 2027-03-15 → 2027-06-20 (+97d) | 2027-03-23 → 2027-06-28 (+97d) |  |  |
| RHD4CZ7L03PT2101 | Excavation and Bedding for Wash out Valve Chambers for Potable Water Network - (RD-L-3)-Z7-L03-PT | 2027-03-15 → 2027-06-20 (+97d) | 2027-03-16 → 2027-06-21 (+97d) |  |  |
| RHD4CZ7L03PT2201 | PC works for Wash out Valve Chambers for Potable Water Network - (RD-L-3)-Z7-L03-PT | 2027-03-17 → 2027-06-22 (+97d) | 2027-03-18 → 2027-06-23 (+97d) |  |  |
| RHD4CZ7L03PT2301 | Installation for Wash out Valve Chambers for Potable Water Network - (RD-L-3)-Z7-L03-PT | 2027-03-20 → 2027-06-24 (+96d) | 2027-03-21 → 2027-06-26 (+97d) |  |  |
| RHD4CZ7L03PT2401 | Backfilling works for Wash out Valve Chambers for Potable Water Network - (RD-L-3)-Z7-L03-PT | 2027-03-22 → 2027-06-27 (+97d) | 2027-03-23 → 2027-06-28 (+97d) |  |  |
| 6479 | **RHD4-02-002-L03-(PT)-Wash out Valves** | 2027-03-15 → 2027-06-20 (+97d) | 2027-03-25 → 2027-06-30 (+97d) |  |  |
| RHD4CZ7L03PT3102 | Installation for Wash out Valves for Potable Water Network - (RD-L-3)-Z7-L03-PT | 2027-03-15 → 2027-06-20 (+97d) | 2027-03-16 → 2027-06-21 (+97d) |  |  |
| RHD4CZ7L03PT3202 | Stem and Service box for Wash out Valves for Potable Water Network - (RD-L-3)-Z7-L03-PT | 2027-03-24 → 2027-06-29 (+97d) | 2027-03-25 → 2027-06-30 (+97d) |  |  |
| 6482 | **RHD4-02-002-L03-(PT)-Fire Hydrant** | 2027-03-24 → 2027-06-29 (+97d) | 2027-04-14 → 2027-07-20 (+97d) |  |  |
| RHD4CZ7L03PT4100 | Excavation and Bedding and Pipe Installation for Fire Hydrant - (RD-L-3)-Z7-L03-PT | 2027-03-24 → 2027-06-29 (+97d) | 2027-03-29 → 2027-07-04 (+97d) |  | resources Skilled labor [54.45 h]; Unskilled Labor [54.45 h]; Plumber [54.45 h]; Equipment Opreator [27.23 h]; Excavator-Poclain [27.23 h]; 3-outlet fire hydrant (2 x 2.5 inch and 1 x 4.5 inch) in the form of a separate dry vacuum cylinder [1 nr] → Skilled labor [54.45 h]; Unskilled Labor [54.45 h]; Plumber [54.45 h]; Equipment Opreator [27.2 h]; Excavator-Poclain [27.2 h]; 3-outlet fire hydrant (2 x 2.5 inch and 1 x 4.5 inch) in the form of a separate dry vacuum cylinder [1 nr] |
| RHD4CZ7L03PT4200 | Valve Installation for Fire Hydrant - (RD-L-3)-Z7-L03-PT | 2027-03-30 → 2027-07-05 (+97d) | 2027-04-03 → 2027-07-08 (+96d) |  |  |
| RHD4CZ7L03PT4300 | Stem for Fire Hydrant - (RD-L-3)-Z7-L03-PT | 2027-04-04 → 2027-07-10 (+97d) | 2027-04-07 → 2027-07-13 (+97d) |  |  |
| RHD4CZ7L03PT4400 | Fire Installation for Fire Hydrant - (RD-L-3)-Z7-L03-PT | 2027-04-08 → 2027-07-14 (+97d) | 2027-04-12 → 2027-07-18 (+97d) |  |  |
| RHD4CZ7L03PT4500 | Protection Barriers for Fire Hydrant - (RD-L-3)-Z7-L03-PT | 2027-04-13 → 2027-07-19 (+97d) | 2027-04-14 → 2027-07-20 (+97d) |  |  |
| 6483 | **RHD4-02-002-L03-(PT)-Concrete Encasement** | 2027-02-18 → 2027-05-31 (+102d) | 2027-02-28 → 2027-06-08 (+100d) |  |  |
| RHD4CZ7L03PT5100 | Pipe Encasement for Potable Pipelines - (RD-L-3)-Z7-L03-PT | 2027-02-18 → 2027-05-31 (+102d) | 2027-02-28 → 2027-06-08 (+100d) |  |  |
| 6097 | **RHD4-02-002-L03-(PT)-Gate Valves (Direct Buried)** | 2027-04-05 → 2027-07-11 (+97d) | 2027-04-15 → 2027-07-21 (+97d) |  |  |
| RHD4CZ7L03PT3100 | Installation for Direct Buried Gate Valves - (RD-L-3)-Z7-L03-PT | 2027-04-05 → 2027-07-11 (+97d) | 2027-04-10 → 2027-07-15 (+96d) |  |  |
| RHD4CZ7L03PT3200 | Stem and Service box for Direct Buried Gate Valves - (RD-L-3)-Z7-L03-PT | 2027-04-11 → 2027-07-17 (+97d) | 2027-04-15 → 2027-07-21 (+97d) |  |  |

| ID | Task | Start | Finish | Duration | Other |
| --- | --- | --- | --- | --- | --- |
| 6471 | **RHD4-02-002-L03-(PT)-HDPE Pipes - 160 mm diameter** | 2027-01-31 → 2027-05-08 (+97d) | 2027-03-14 → 2027-06-19 (+97d) |  |  |
| RHD4CZ7L03PT1101 | Excavation works for HDPE Pipline 160 mm - (RD-L-3)-Z7-L03-PT | 2027-01-31 → 2027-05-08 (+97d) | 2027-02-04 → 2027-05-12 (+97d) |  | resources Skilled labor [48.03 h]; Unskilled Labor [48.03 h]; Equipment Opreator [57.61 h]; Excavator-Poclain [48.03 h]; Dump Truck [9.58 h]; HDPE (160mm Diameter) - PT - Depth: less than 1.5m [104.76 m]; HDPE (160mm Diameter) - PT - Depth: 1.51m - 2.5m [3.65 m] → Skilled labor [48 h]; Unskilled Labor [48 h]; Equipment Opreator [57.6 h]; Excavator-Poclain [48 h]; Dump Truck [9.6 h]; HDPE (160mm Diameter) - PT - Depth: less than 1.5m [104.76 m]; HDPE (160mm Diameter) - PT - Depth: 1.51m - 2.5m [3.65 m] |
| RHD4CZ7L03PT1201 | Bedding works for HDPE Pipline 160 mm - (RD-L-3)-Z7-L03-PT | 2027-02-06 → 2027-05-13 (+96d) | 2027-02-09 → 2027-05-22 (+102d) |  |  |
| RHD4CZ7L03PT1301 | Installing for HDPE Pipline 160 mm - (RD-L-3)-Z7-L03-PT | 2027-02-10 → 2027-05-23 (+102d) | 2027-02-17 → 2027-05-30 (+102d) |  |  |
| RHD4CZ7L03PT1401 | Primary Test for HDPE Pipline 160 mm - (RD-L-3)-Z7-L03-PT | 2027-03-01 → 2027-06-09 (+100d) | 2027-03-03 → 2027-06-12 (+101d) |  |  |
| RHD4CZ7L03PT1501 | Backfilling and warning tape works for HDPE Pipline 160 mm - (RD-L-3)-Z7-L03-PT | 2027-03-04 → 2027-06-13 (+101d) | 2027-03-14 → 2027-06-19 (+97d) |  | resources Skilled labor [58.37 h]; Unskilled Labor [116.74 h]; Equipment Opreator [116.74 h]; Excavator-Poclain [58.37 h]; Dump Truck [58.37 h]; HDPE (160mm Diameter) - PT - Depth: less than 1.5m [209.52 m]; HDPE (160mm Diameter) - PT - Depth: 1.51m - 2.5m [4.86 m] → Skilled labor [58.4 h]; Unskilled Labor [116.74 h]; Equipment Opreator [116.74 h]; Excavator-Poclain [58.4 h]; Dump Truck [58.4 h]; HDPE (160mm Diameter) - PT - Depth: less than 1.5m [209.52 m]; HDPE (160mm Diameter) - PT - Depth: 1.51m - 2.5m [4.86 m] |
| 6484 | **RHD4-02-002-Z7-L03-Irrigation Network - IRR** | 2027-02-06 → 2027-05-13 (+96d) | 2027-04-18 → 2027-08-21 (+125d) |  |  |
| 6485 | **RHD4-02-002-L03-(IRR)-HDPE Pipes - 160 mm diameter** | 2027-02-11 → 2027-05-24 (+102d) | 2027-02-23 → 2027-06-03 (+100d) |  |  |
| RHD4CZ7L03IRR1100 | Excavation works for HDPE Pipline 160 mm - (RD-L-3)-Z7-L03-IRR | 2027-02-11 → 2027-05-24 (+102d) | 2027-02-13 → 2027-05-25 (+101d) |  |  |
| RHD4CZ7L03IRR1200 | Bedding works for HDPE Pipline 160 mm - (RD-L-3)-Z7-L03-IRR | 2027-02-14 → 2027-05-26 (+101d) | 2027-02-15 → 2027-05-27 (+101d) |  |  |
| RHD4CZ7L03IRR1300 | Installing for HDPE Pipline 160 mm - (RD-L-3)-Z7-L03-IRR | 2027-02-16 → 2027-05-29 (+102d) | 2027-02-17 → 2027-05-30 (+102d) |  |  |
| RHD4CZ7L03IRR1400 | Primary Test for HDPE Pipline 160 mm - (RD-L-3)-Z7-L03-IRR | 2027-02-18 → 2027-05-31 (+102d) | 2027-02-20 → 2027-06-01 (+101d) |  |  |
| RHD4CZ7L03IRR1500 | Backfilling and warning tape works for HDPE Pipline 160 mm - (RD-L-3)-Z7-L03-IRR | 2027-02-21 → 2027-06-02 (+101d) | 2027-02-23 → 2027-06-03 (+100d) |  |  |
| 6489 | **RHD4-02-002-L03-(IRR)-HDPE Pipes - 315 mm diameter** | 2027-02-06 → 2027-05-13 (+96d) | 2027-03-06 → 2027-06-14 (+100d) |  |  |
| RHD4CZ7L03IRR1104 | Excavation works for HDPE Pipline 315 mm - (RD-L-3)-Z7-L03-IRR | 2027-02-06 → 2027-05-13 (+96d) | 2027-02-10 → 2027-05-23 (+102d) |  | resources Skilled labor [76.67 h]; Unskilled Labor [76.67 h]; Equipment Opreator [92.02 h]; Excavator-Poclain [76.67 h]; Dump Truck [15.36 h]; HDPE (315mm Diameter) - TSE - Depth: less than 1.5m [90.67 m]; HDPE (315mm Diameter) - TSE - Depth: more than 1.51m [22.34 m] → Skilled labor [76.67 h]; Unskilled Labor [76.67 h]; Equipment Opreator [92 h]; Excavator-Poclain [76.67 h]; Dump Truck [15.36 h]; HDPE (315mm Diameter) - TSE - Depth: less than 1.5m [90.67 m]; HDPE (315mm Diameter) - TSE - Depth: more than 1.51m [22.34 m] |
| RHD4CZ7L03IRR1204 | Bedding works for HDPE Pipline 315 mm - (RD-L-3)-Z7-L03-IRR | 2027-02-11 → 2027-05-24 (+102d) | 2027-02-16 → 2027-05-29 (+102d) |  |  |
| RHD4CZ7L03IRR1304 | Installing for HDPE Pipline 315 mm - (RD-L-3)-Z7-L03-IRR | 2027-02-17 → 2027-05-30 (+102d) | 2027-02-23 → 2027-06-03 (+100d) |  |  |
| RHD4CZ7L03IRR1404 | Primary Test for HDPE Pipline 315 mm - (RD-L-3)-Z7-L03-IRR | 2027-02-24 → 2027-06-05 (+101d) | 2027-02-27 → 2027-06-07 (+100d) |  |  |
| RHD4CZ7L03IRR1504 | Backfilling and warning tape works for HDPE Pipline 315 mm - (RD-L-3)-Z7-L03-IRR | 2027-02-28 → 2027-06-08 (+100d) | 2027-03-06 → 2027-06-14 (+100d) |  |  |
| 6493 | **RHD4-02-002-L03-(IRR)-Gate Valves (Direct Buried)** | 2027-02-20 → 2027-06-01 (+101d) | 2027-02-27 → 2027-06-07 (+100d) |  |  |
| RHD4CZ7L03IRR3100 | Installation for Direct Buried Gate Valves - (RD-L-3)-Z7-L03-IRR | 2027-02-20 → 2027-06-01 (+101d) | 2027-02-23 → 2027-06-03 (+100d) |  |  |
| RHD4CZ7L03IRR3200 | Stem and Service box for Direct Buried Gate Valves - (RD-L-3)-Z7-L03-IRR | 2027-02-24 → 2027-06-05 (+101d) | 2027-02-27 → 2027-06-07 (+100d) |  |  |
| 6494 | **RHD4-02-002-L03-(IRR)-Butterfly Valve Chamber** | 2027-03-07 → 2027-06-15 (+100d) | 2027-03-18 → 2027-08-18 (+153d) |  |  |
| RHD4CZ7L03IRR2100 | Excavation and Bedding for Butterfly Valve Chamber for Irrigation Network - (RD-L-3)-Z7-L03-IRR | 2027-03-07 → 2027-06-15 (+100d) | 2027-03-08 → 2027-06-16 (+100d) |  |  |
| RHD4CZ7L03IRR2200 | PC works for Butterfly Valve Chamber for Irrigation Network - (RD-L-3)-Z7-L03-IRR | 2027-03-13 → 2027-06-17 (+96d) | 2027-03-14 → 2027-06-19 (+97d) |  |  |
| RHD4CZ7L03IRR2300 | Installation for Butterfly Valve Chamber for Irrigation Network - (RD-L-3)-Z7-L03-IRR | 2027-03-15 → 2027-06-20 (+97d) | 2027-03-16 → 2027-06-21 (+97d) |  |  |
| RHD4CZ7L03IRR2400 | Backfilling works for Butterfly Valve Chamber for Irrigation Network - (RD-L-3)-Z7-L03-IRR | 2027-03-17 → 2027-08-17 (+153d) | 2027-03-18 → 2027-08-18 (+153d) |  |  |
| 6495 | **RHD4-02-002-L03-(IRR)-Butterfly Valves** | 2027-03-17 → 2027-06-22 (+97d) | 2027-03-21 → 2027-08-21 (+153d) |  |  |
| RHD4CZ7L03IRR3101 | Installation for Butterfly Valves for Irrigation Network - (RD-L-3)-Z7-L03-IRR | 2027-03-17 → 2027-06-22 (+97d) | 2027-03-18 → 2027-06-23 (+97d) |  |  |
| RHD4CZ7L03IRR3201 | Stem and Service box for Butterfly Valves for Irrigation Network - (RD-L-3)-Z7-L03-IRR | 2027-03-20 → 2027-08-19 (+152d) | 2027-03-21 → 2027-08-21 (+153d) |  |  |
| 6498 | **RHD4-02-002-L03-(IRR)-Air Valve Chamber** | 2027-03-07 → 2027-06-15 (+100d) | 2027-03-18 → 2027-06-23 (+97d) |  |  |
| RHD4CZ7L03IRR2102 | Excavation and Bedding for Valve Chamber for Irrigation Network - (RD-L-3)-Z7-L03-IRR | 2027-03-07 → 2027-06-15 (+100d) | 2027-03-08 → 2027-06-16 (+100d) |  |  |
| RHD4CZ7L03IRR2202 | PC works for Valve Chamber for Irrigation Network - (RD-L-3)-Z7-L03-IRR | 2027-03-13 → 2027-06-17 (+96d) | 2027-03-14 → 2027-06-19 (+97d) |  |  |
| RHD4CZ7L03IRR2302 | Installation for Valve Chamber for Irrigation Network - (RD-L-3)-Z7-L03-IRR | 2027-03-15 → 2027-06-20 (+97d) | 2027-03-16 → 2027-06-21 (+97d) |  |  |
| RHD4CZ7L03IRR2402 | Backfilling works for Valve Chamber for Irrigation Network - (RD-L-3)-Z7-L03-IRR | 2027-03-17 → 2027-06-22 (+97d) | 2027-03-18 → 2027-06-23 (+97d) |  |  |
| 6499 | **RHD4-02-002-L03-(IRR)-Air Valves** | 2027-03-17 → 2027-06-22 (+97d) | 2027-03-21 → 2027-06-26 (+97d) |  |  |
| RHD4CZ7L03IRR3103 | Installation for Air Valves for Irrigation Network - (RD-L-3)-Z7-L03-IRR | 2027-03-17 → 2027-06-22 (+97d) | 2027-03-18 → 2027-06-23 (+97d) |  |  |
| RHD4CZ7L03IRR3203 | Stem and Service box for Air Valves for Irrigation Network - (RD-L-3)-Z7-L03-IRR | 2027-03-20 → 2027-06-24 (+96d) | 2027-03-21 → 2027-06-26 (+97d) |  |  |
| 6685 | **RHD4-02-002-L03-(IRR)-Wash out Chamber** | 2027-02-11 → 2027-05-24 (+102d) | 2027-02-20 → 2027-06-01 (+101d) |  |  |
| RHD4CZ7L03IRR2101 | Excavation and Bedding for Wash out Chamber for Irrigation Network - (RD-L-3)-Z7-L03-IRR | 2027-02-11 → 2027-05-24 (+102d) | 2027-02-13 → 2027-05-25 (+101d) |  |  |
| RHD4CZ7L03IRR2201 | PC works for Wash out Chamber for Irrigation Network - (RD-L-3)-Z7-L03-IRR | 2027-02-14 → 2027-05-26 (+101d) | 2027-02-15 → 2027-05-27 (+101d) |  |  |
| RHD4CZ7L03IRR2301 | Installation for Wash out Chamber for Irrigation Network - (RD-L-3)-Z7-L03-IRR | 2027-02-16 → 2027-05-29 (+102d) | 2027-02-17 → 2027-05-30 (+102d) |  |  |
| RHD4CZ7L03IRR2401 | Backfilling works for Wash out Chamber for Irrigation Network - (RD-L-3)-Z7-L03-IRR | 2027-02-18 → 2027-05-31 (+102d) | 2027-02-20 → 2027-06-01 (+101d) |  |  |
| 6686 | **RHD4-02-002-L03-(IRR)-Wash out Valves** | 2027-02-18 → 2027-05-31 (+102d) | 2027-04-18 → 2027-07-24 (+97d) |  |  |
| RHD4CZ7L03IRR3102 | Installation for Wash out Valve for Irrigation Network - (RD-L-3)-Z7-L03-IRR | 2027-02-18 → 2027-05-31 (+102d) | 2027-02-20 → 2027-06-01 (+101d) |  |  |
| RHD4CZ7L03IRR3202 | Stem and Service box for Wash out Valve for Irrigation Network - (RD-L-3)-Z7-L03-IRR | 2027-04-17 → 2027-07-22 (+96d) | 2027-04-18 → 2027-07-24 (+97d) |  |  |
| 6518 | **RHD4-02-002-Z7-L03-Medium Voltage Network - MV** | 2026-09-13 → 2027-03-15 (+183d) | 2027-04-08 → 2027-09-20 (+165d) |  |  |
| 6519 | **RHD4-02-002-L03-(MV)-Medium Voltage cable trench** | 2027-02-03 → 2027-07-14 (+161d) | 2027-03-22 → 2027-09-02 (+164d) |  |  |
| RHD4CZ7L03MV1100 | Excavation for Medium Voltage Trench - (RD-L-3)-Z7-L03-MV | 2027-02-03 → 2027-07-14 (+161d) | 2027-02-20 → 2027-07-31 (+161d) |  |  |
| RHD4CZ7L03MV1200 | Trench Backfilling for Medium Voltage Network - (RD-L-3)-Z7-L03-MV | 2027-03-02 → 2027-08-17 (+168d) | 2027-03-22 → 2027-09-02 (+164d) |  |  |
| 6520 | **RHD4-02-002-L03-(MV)-Medium Voltage duct banks** | 2026-09-13 → 2027-03-15 (+183d) | 2026-09-27 → 2027-03-28 (+182d) |  |  |
| RHD4CZ7L03MV2100 | Excavation of Duct Banks for Medium Voltage Network - (RD-L-3)-Z7-L03-MV | 2026-09-13 → 2027-03-15 (+183d) | 2026-09-15 → 2027-03-17 (+183d) |  |  |
| RHD4CZ7L03MV2200 | Installation of Duct Banks for Medium Voltage Network - (RD-L-3)-Z7-L03-MV | 2026-09-16 → 2027-03-18 (+183d) | 2026-09-20 → 2027-03-22 (+183d) |  |  |
| RHD4CZ7L03MV2300 | Pouring of Duct Banks for Medium Voltage Network - (RD-L-3)-Z7-L03-MV | 2026-09-21 → 2027-03-23 (+183d) | 2026-09-24 → 2027-03-25 (+182d) |  |  |
| RHD4CZ7L03MV2400 | Backfilling of Duct Banks for Medium Voltage Network - (RD-L-3)-Z7-L03-MV | 2026-09-26 → 2027-03-27 (+182d) | 2026-09-27 → 2027-03-28 (+182d) |  |  |
| 6521 | **RHD4-02-002-L03-(MV)-Medium Voltage cables 3Cx 500 mm²** | 2027-02-21 → 2027-08-01 (+161d) | 2027-04-08 → 2027-09-20 (+165d) |  |  |
| RHD4CZ7L03MV3100 | Installation of Medium Voltage Cables 3Cx 500 mm² - (RD-L-3)-Z7-L03-MV | 2027-02-21 → 2027-08-01 (+161d) | 2027-02-24 → 2027-08-11 (+168d) | 3d → 10d |  |
| RHD4CZ7L03MV3200 | Joints Installation of Medium Voltage Cables 3Cx 500 mm² - (RD-L-3)-Z7-L03-MV | 2027-02-25 → 2027-08-12 (+168d) | 2027-03-01 → 2027-08-16 (+168d) |  |  |
| RHD4CZ7L03MV3300 | Testing of Medium Voltage Cables 3Cx 500 mm² - (RD-L-3)-Z7-L03-MV | 2027-03-23 → 2027-09-04 (+165d) | 2027-03-25 → 2027-09-14 (+173d) | 3d → 10d |  |
| RHD4CZ7L03MV3400 | Termination of Medium Voltage Cables 3Cx 500 mm² - (RD-L-3)-Z7-L03-MV | 2027-04-07 → 2027-09-19 (+165d) | 2027-04-08 → 2027-09-20 (+165d) |  |  |
| 6522 | **RHD4-02-002-L03-(MV)-Medium Voltage cables 3Cx 50 mm²** | 2027-02-21 → 2027-08-01 (+161d) | 2027-04-08 → 2027-09-20 (+165d) |  |  |
| RHD4CZ7L03MV3101 | Installation of Medium Voltage Cables 3Cx 50 mm² - (RD-L-3)-Z7-L03-MV | 2027-02-21 → 2027-08-01 (+161d) | 2027-02-23 → 2027-08-02 (+160d) |  |  |
| RHD4CZ7L03MV3301 | Testing of Medium Voltage Cables 3Cx 50 mm² - (RD-L-3)-Z7-L03-MV | 2027-02-24 → 2027-08-03 (+160d) | 2027-02-25 → 2027-08-04 (+160d) |  |  |
| RHD4CZ7L03MV3401 | Termination of Medium Voltage Cables 3Cx 50 mm² - (RD-L-3)-Z7-L03-MV | 2027-04-07 → 2027-09-19 (+165d) | 2027-04-08 → 2027-09-20 (+165d) |  |  |
| 6523 | **RHD4-02-002-L03-(MV)-Normally open Point (Outdoor Type)** | 2027-02-23 → 2027-08-10 (+168d) | 2027-02-27 → 2027-08-14 (+168d) |  |  |
| RHD4CZ7L03MV4100 | Installation for Normally open Point - (RD-L-3)-Z7-L03-MV | 2027-02-23 → 2027-08-10 (+168d) | 2027-02-24 → 2027-08-11 (+168d) |  |  |
| RHD4CZ7L03MV4200 | Termination for Normally open Point - (RD-L-3)-Z7-L03-MV | 2027-02-25 → 2027-08-12 (+168d) | 2027-02-27 → 2027-08-14 (+168d) |  |  |
| 6524 | **RHD4-02-002-L03-(MV)-Unit Substations** | 2027-03-23 → 2027-09-04 (+165d) | 2027-04-06 → 2027-09-18 (+165d) |  |  |
| RHD4CZ7L03MV5100 | Excavation for Unit Substations for Medium Voltage Network - (RD-L-3)-Z7-L03-MV | 2027-03-23 → 2027-09-04 (+165d) | 2027-03-24 → 2027-09-05 (+165d) |  |  |
| RHD4CZ7L03MV5200 | Concrete Base Placement for Unit Substations for Medium Voltage Network - (RD-L-3)-Z7-L03-MV | 2027-03-25 → 2027-09-06 (+165d) | 2027-03-27 → 2027-09-07 (+164d) |  |  |

| ID | Task | Start | Finish | Duration | Other |
| --- | --- | --- | --- | --- | --- |
| RHD4CZ7L03MV5300 | Installation for Fences and doors for Medium Voltage Network - (RD-L-3)-Z7-L03-MV | 2027-03-28 → 2027-09-08 (+164d) | 2027-04-01 → 2027-09-13 (+165d) |  |  |
| RHD4CZ7L03MV5400 | Installation for Unit Substations for Medium Voltage Network - (RD-L-3)-Z7-L03-MV | 2027-04-03 → 2027-09-14 (+164d) | 2027-04-06 → 2027-09-18 (+165d) |  |  |
| 6525 | **RHD4-02-002-Z7-L03-Low Voltage Network - LV** | 2026-12-15 → 2027-04-13 (+119d) | 2027-01-11 → 2027-05-10 (+119d) |  |  |
| 6527 | **RHD4-02-002-L03-(LV)-Low Voltage Drawpit** | 2026-12-15 → 2027-04-13 (+119d) | 2026-12-19 → 2027-04-17 (+119d) |  |  |
| RHD4CZ7L03LV5100 | Excavation of Drawpit size 900x900x1000mm for Low Voltage Network - (RD-L-3)-Z7-L03-LV | 2026-12-15 → 2027-04-13 (+119d) | 2026-12-16 → 2027-04-14 (+119d) |  | resources Skilled labor [1.85 h]; Unskilled Labor [1.85 h]; Equipment Opreator [1.42 h]; Excavator-Poclain [0.76 h]; Dump Truck [0.76 h]; Drawpit with medium duty steel cover, size900x900x1000mm, [0.3 Unit] → Skilled labor [1.85 h]; Unskilled Labor [1.85 h]; Equipment Opreator [1.42 h]; Excavator-Poclain [0.8 h]; Dump Truck [0.8 h]; Drawpit with medium duty steel cover, size900x900x1000mm, [0.3 Unit] |
| RHD4CZ7L03LV5200 | Installation of Drawpit size 900x900x1000mm for Low Voltage Network - (RD-L-3)-Z7-L03-LV | 2026-12-17 → 2027-04-15 (+119d) | 2026-12-19 → 2027-04-17 (+119d) |  | resources Skilled labor [1.85 h]; Unskilled Labor [1.85 h]; Equipment Opreator [0.76 h]; Boom Truck [0.76 h]; Drawpit with medium duty steel cover, size900x900x1000mm, [1.7 Unit] → Skilled labor [1.85 h]; Unskilled Labor [1.85 h]; Equipment Opreator [0.8 h]; Boom Truck [0.8 h]; Drawpit with medium duty steel cover, size900x900x1000mm, [1.7 Unit] |
| 6528 | **RHD4-02-002-L03-(LV)-Low Voltage cables** | 2026-12-20 → 2027-04-18 (+119d) | 2027-01-04 → 2027-05-03 (+119d) |  |  |
| RHD4CZ7L03LV3100 | Excavation for Low Voltage Cables for Low Voltage Network - (RD-L-3)-Z7-L03-LV | 2026-12-20 → 2027-04-18 (+119d) | 2026-12-23 → 2027-04-21 (+119d) |  | resources Skilled labor [39.64 h]; Unskilled Labor [79.17 h]; Equipment Opreator [79.17 h]; Excavator-Poclain [39.64 h]; Boom Truck [39.64 h]; Cable, Copper 4x50mm2/ CU/XLPE/PVC +1x25mm2 CU/PVC [36.02 m]; Cable, Copper 3x10mm2/ CU/XLPE/SWA/PVC [145.78 m] → Skilled labor [39.64 h]; Unskilled Labor [79.2 h]; Equipment Opreator [79.2 h]; Excavator-Poclain [39.64 h]; Boom Truck [39.64 h]; Cable, Copper 4x50mm2/ CU/XLPE/PVC +1x25mm2 CU/PVC [36.02 m]; Cable, Copper 3x10mm2/ CU/XLPE/SWA/PVC [145.78 m] |
| RHD4CZ7L03LV3200 | Cable Laying of Low Voltage Cables for Low Voltage Network - (RD-L-3)-Z7-L03-LV | 2026-12-24 → 2027-04-22 (+119d) | 2026-12-28 → 2027-04-26 (+119d) |  | resources Skilled labor [33 h]; Unskilled Labor [131.99 h]; Electrician [66 h]; Equipment Opreator [98.99 h]; Boom Truck [33 h]; Cable Laying Machine [66 h]; Cable, Copper 4x50mm2/ CU/XLPE/PVC +1x25mm2 CU/PVC [108.07 m]; Cable, Copper 3x10mm2/ CU/XLPE/SWA/PVC [437.35 m] → Skilled labor [33 h]; Unskilled Labor [132 h]; Electrician [66 h]; Equipment Opreator [98.99 h]; Boom Truck [33 h]; Cable Laying Machine [66 h]; Cable, Copper 4x50mm2/ CU/XLPE/PVC +1x25mm2 CU/PVC [108.07 m]; Cable, Copper 3x10mm2/ CU/XLPE/SWA/PVC [437.35 m] |
| RHD4CZ7L03LV3300 | Warning tape and Backfill for Low Voltage Cables for Low Voltage Network - (RD-L-3)-Z7-L03-LV | 2026-12-29 → 2027-04-27 (+119d) | 2027-01-02 → 2027-05-01 (+119d) |  | resources Skilled labor [33 h]; Unskilled Labor [131.99 h]; Electrician [66 h]; Equipment Opreator [33 h]; Boom Truck [33 h]; Cable, Copper 4x50mm2/ CU/XLPE/PVC +1x25mm2 CU/PVC [27.02 m]; Cable, Copper 3x10mm2/ CU/XLPE/SWA/PVC [109.34 m] → Skilled labor [33 h]; Unskilled Labor [132 h]; Electrician [66 h]; Equipment Opreator [33 h]; Boom Truck [33 h]; Cable, Copper 4x50mm2/ CU/XLPE/PVC +1x25mm2 CU/PVC [27.02 m]; Cable, Copper 3x10mm2/ CU/XLPE/SWA/PVC [109.34 m] |
| RHD4CZ7L03LV3400 | Testing of Low Voltage Cables for Low Voltage Network - (RD-L-3)-Z7-L03-LV | 2027-01-03 → 2027-05-02 (+119d) | 2027-01-04 → 2027-05-03 (+119d) |  | resources Skilled labor [19.82 h]; Unskilled Labor [79.17 h]; Electrician [39.64 h]; Equipment Opreator [19.82 h]; Boom Truck [19.82 h]; Cable, Copper 4x50mm2/ CU/XLPE/PVC +1x25mm2 CU/PVC [9.01 m]; Cable, Copper 3x10mm2/ CU/XLPE/SWA/PVC [36.45 m] → Skilled labor [19.82 h]; Unskilled Labor [79.2 h]; Electrician [39.64 h]; Equipment Opreator [19.82 h]; Boom Truck [19.82 h]; Cable, Copper 4x50mm2/ CU/XLPE/PVC +1x25mm2 CU/PVC [9.01 m]; Cable, Copper 3x10mm2/ CU/XLPE/SWA/PVC [36.45 m] |
| 6529 | **RHD4-02-002-L03-(LV)-Low Voltage Distribution Pillars** | 2027-01-05 → 2027-05-04 (+119d) | 2027-01-11 → 2027-05-10 (+119d) |  |  |
| RHD4CZ7L03LV4100 | Leveling for Distribution Pillars for Low Voltage Network - (RD-L-3)-Z7-L03-LV | 2027-01-05 → 2027-05-04 (+119d) | 2027-01-06 → 2027-05-05 (+119d) |  |  |
| RHD4CZ7L03LV4200 | Lean Concrete for Distribution Pillars for Low Voltage Network - (RD-L-3)-Z7-L03-LV | 2027-01-07 → 2027-05-06 (+119d) | 2027-01-09 → 2027-05-08 (+119d) |  |  |
| RHD4CZ7L03LV4300 | Installation of Distribution Pillars for Low Voltage Network - (RD-L-3)-Z7-L03-LV | 2027-01-10 → 2027-05-09 (+119d) | 2027-01-11 → 2027-05-10 (+119d) |  |  |
| 6531 | **RHD4-02-002-Z7-L03-Street Lighting Network - SL** | 2026-09-16 → 2027-03-18 (+183d) | 2027-02-08 → 2027-07-31 (+173d) |  |  |
| 6532 | **RHD4-02-002-L03-(SL)-Street Lighting duct banks** | 2026-09-16 → 2027-03-18 (+183d) | 2026-09-26 → 2027-03-27 (+182d) |  |  |
| RHD4CZ7L03SL2100 | Excavation of Duct Banks for Street Lighting Network - (RD-L-3)-Z7-L03-SL | 2026-09-16 → 2027-03-18 (+183d) | 2026-09-17 → 2027-03-20 (+184d) |  |  |
| RHD4CZ7L03SL2200 | Installation of Duct Banks for Street Lighting Network - (RD-L-3)-Z7-L03-SL | 2026-09-19 → 2027-03-21 (+183d) | 2026-09-20 → 2027-03-22 (+183d) |  |  |
| RHD4CZ7L03SL2300 | Pouring of Duct Banks for Street Lighting Network - (RD-L-3)-Z7-L03-SL | 2026-09-21 → 2027-03-23 (+183d) | 2026-09-22 → 2027-03-24 (+183d) |  |  |
| RHD4CZ7L03SL2400 | Backfilling of Duct Banks for Street Lighting Network - (RD-L-3)-Z7-L03-SL | 2026-09-24 → 2027-03-25 (+182d) | 2026-09-26 → 2027-03-27 (+182d) |  |  |
| 6533 | **RHD4-02-002-L03-(SL)-Street Lighting Drawpit** | 2027-01-12 → 2027-05-11 (+119d) | 2027-01-16 → 2027-05-19 (+123d) |  |  |
| RHD4CZ7L03SL5100 | Excavation of Drawpit size 600x600x900mm for Street Lighting Network - (RD-L-3)-Z7-L03-SL | 2027-01-12 → 2027-05-11 (+119d) | 2027-01-13 → 2027-05-12 (+119d) |  | resources Skilled labor [1.85 h]; Unskilled Labor [1.85 h]; Equipment Opreator [1.42 h]; Excavator-Poclain [0.76 h]; Dump Truck [0.76 h]; Drawpit with medium duty steel cover, size600x600x900mm, [0.3 Unit] → Skilled labor [1.85 h]; Unskilled Labor [1.85 h]; Equipment Opreator [1.42 h]; Excavator-Poclain [0.8 h]; Dump Truck [0.8 h]; Drawpit with medium duty steel cover, size600x600x900mm, [0.3 Unit] |
| RHD4CZ7L03SL5200 | Installation of Drawpit size 600x600x900mm for Street Lighting Network - (RD-L-3)-Z7-L03-SL | 2027-01-14 → 2027-05-13 (+119d) | 2027-01-16 → 2027-05-19 (+123d) |  | resources Skilled labor [1.85 h]; Unskilled Labor [1.85 h]; Equipment Opreator [0.76 h]; Boom Truck [0.76 h]; Drawpit with medium duty steel cover, size600x600x900mm, [1.7 Unit] → Skilled labor [1.85 h]; Unskilled Labor [1.85 h]; Equipment Opreator [0.8 h]; Boom Truck [0.8 h]; Drawpit with medium duty steel cover, size600x600x900mm, [1.7 Unit] |
| 6534 | **RHD4-02-002-L03-(SL)-Street Lighting cables** | 2027-01-17 → 2027-05-20 (+123d) | 2027-01-25 → 2027-06-27 (+153d) |  |  |
| RHD4CZ7L03SL3100 | Excavation for Street Lighting Cables for Street Lighting Network - (RD-L-3)-Z7-L03-SL | 2027-01-17 → 2027-05-20 (+123d) | 2027-01-18 → 2027-05-31 (+133d) | 2d → 10d |  |
| RHD4CZ7L03SL3200 | Cable Laying of Street Lighting Cables for Street Lighting Network - (RD-L-3)-Z7-L03-SL | 2027-01-19 → 2027-06-01 (+133d) | 2027-01-20 → 2027-06-10 (+141d) | 2d → 9d |  |
| RHD4CZ7L03SL3300 | Warning tape and Backfill for Street Lighting Cables for Street Lighting Network - (RD-L-3)-Z7-L03-SL | 2027-01-21 → 2027-06-12 (+142d) | 2027-01-23 → 2027-06-21 (+149d) | 2d → 9d |  |
| RHD4CZ7L03SL3400 | Testing of Street Lighting Cables for Street Lighting Network - (RD-L-3)-Z7-L03-SL | 2027-01-24 → 2027-06-22 (+149d) | 2027-01-25 → 2027-06-27 (+153d) | 2d → 5d |  |
| 6535 | **RHD4-02-002-L03-(SL)-Street Lighting Poles** | 2027-01-26 → 2027-06-28 (+153d) | 2027-02-08 → 2027-07-31 (+173d) |  |  |
| RHD4CZ7L03SL1100 | Excavation for RC Base for Lighting Poles for Street Lighting Network - (RD-L-3)-Z7-L03-SL | 2027-01-26 → 2027-06-28 (+153d) | 2027-01-27 → 2027-07-03 (+157d) | 2d → 5d |  |
| RHD4CZ7L03SL1200 | Installation for RC Base for Lighting Poles for Street Lighting Network - (RD-L-3)-Z7-L03-SL | 2027-01-28 → 2027-07-04 (+157d) | 2027-01-30 → 2027-07-08 (+159d) | 2d → 5d |  |
| RHD4CZ7L03SL1300 | Backfill for RC Base for Lighting Poles for Street Lighting Network - (RD-L-3)-Z7-L03-SL | 2027-01-31 → 2027-07-10 (+160d) | 2027-02-01 → 2027-07-14 (+163d) | 2d → 5d |  |
| RHD4CZ7L03SL1400 | Installation for Lighting Poles for Street Lighting Network - (RD-L-3)-Z7-L03-SL | 2027-02-02 → 2027-07-15 (+163d) | 2027-02-03 → 2027-07-22 (+169d) | 2d → 7d |  |
| RHD4CZ7L03SL1500 | Luminaire Installation for Lighting Poles for Street Lighting Network - (RD-L-3)-Z7-L03-SL | 2027-02-07 → 2027-07-26 (+169d) | 2027-02-08 → 2027-07-31 (+173d) | 2d → 5d |  |
| 6537 | **RHD4-02-002-L03-(SL)-Street Lighting Earthing System** | 2027-02-04 → 2027-07-24 (+170d) | 2027-02-06 → 2027-07-25 (+169d) |  |  |
| RHD4CZ7L03SL6100 | Installation of Earthing for Lighting Poles and Fedder Pillers for Street Lighting Network - (RD-L-3)-Z7-L03-SL | 2027-02-04 → 2027-07-24 (+170d) | 2027-02-06 → 2027-07-25 (+169d) |  | resources Skilled labor [0.76 h]; Unskilled Labor [0.76 h]; Equipment Opreator [1.42 h]; Excavator-Poclain [0.76 h]; Dump Truck [0.76 h]; Including lighting poles circuits - ER [1 Unit] → Skilled labor [0.8 h]; Unskilled Labor [0.8 h]; Equipment Opreator [1.42 h]; Excavator-Poclain [0.8 h]; Dump Truck [0.8 h]; Including lighting poles circuits - ER [1 Unit] |
| 6543 | **RHD4-02-002-Z7-L03-Telecommunications Network - TC** | 2026-08-16 → 2027-02-08 (+176d) | 2027-03-20 → 2027-09-11 (+175d) |  |  |
| 6544 | **RHD4-02-002-L03-(TC)-Telecommunications Ducts** | 2027-02-09 → 2027-08-01 (+173d) | 2027-03-20 → 2027-09-11 (+175d) |  |  |
| RHD4CZ7L03TC2100 | Excavation of HDPE Ducts for Telecom Network - (RD-L-3)-Z7-L03-TC | 2027-02-09 → 2027-08-01 (+173d) | 2027-02-15 → 2027-08-14 (+180d) | 6d → 12d |  |
| RHD4CZ7L03TC2200 | Installation of HDPE Ducts for Telecom Network - (RD-L-3)-Z7-L03-TC | 2027-02-16 → 2027-08-15 (+180d) | 2027-02-24 → 2027-08-22 (+179d) |  |  |
| RHD4CZ7L03TC2400 | Backfilling of HDPE Ducts for Telecom Network - (RD-L-3)-Z7-L03-TC | 2027-03-03 → 2027-08-29 (+179d) | 2027-03-20 → 2027-09-11 (+175d) |  |  |
| 6545 | **RHD4-02-002-L03-(TC)-Telecommunications Manholes** | 2027-02-16 → 2027-08-15 (+180d) | 2027-03-02 → 2027-08-28 (+179d) |  |  |
| RHD4CZ7L03TC5100 | Excavation for Manholes for Telecom Network - (RD-L-3)-Z7-L03-TC | 2027-02-16 → 2027-08-15 (+180d) | 2027-02-23 → 2027-08-21 (+179d) |  |  |
| RHD4CZ7L03TC5200 | Installation of Manholes for Telecom Network - (RD-L-3)-Z7-L03-TC | 2027-02-24 → 2027-08-22 (+179d) | 2027-03-02 → 2027-08-28 (+179d) |  |  |
| 6546 | **RHD4-02-002-L03-(TC)-Telecomminications Road Crossings** | 2026-08-16 → 2027-02-08 (+176d) | 2026-08-26 → 2027-02-18 (+176d) |  |  |
| RHD4CZ7L03TC3100 | Excavation for Road Crossings for Telecom Network - (RD-L-3)-Z7-L03-TC | 2026-08-16 → 2027-02-08 (+176d) | 2026-08-17 → 2027-02-09 (+176d) |  |  |
| RHD4CZ7L03TC3200 | Installation of Road Crossings for Telecom Network - (RD-L-3)-Z7-L03-TC | 2026-08-18 → 2027-02-10 (+176d) | 2026-08-20 → 2027-02-13 (+177d) |  |  |
| RHD4CZ7L03TC3300 | Pouring of Road Crossings for Telecom Network - (RD-L-3)-Z7-L03-TC | 2026-08-22 → 2027-02-14 (+176d) | 2026-08-24 → 2027-02-16 (+176d) |  |  |
| RHD4CZ7L03TC3400 | Backfilling of Road Crossings for Telecom Network - (RD-L-3)-Z7-L03-TC | 2026-08-25 → 2027-02-17 (+176d) | 2026-08-26 → 2027-02-18 (+176d) |  |  |
| 6547 | **RHD4-02-002-Z7-L03-Information and Communication Technologies - ICT** | 2026-08-16 → 2027-02-08 (+176d) | 2027-04-24 → 2027-11-03 (+193d) |  |  |
| 6548 | **RHD4-02-002-L03-(ICT)-Information and Communication Technologies Ducts** | 2027-03-21 → 2027-09-12 (+175d) | 2027-04-24 → 2027-11-03 (+193d) |  |  |
| RHD4CZ7L03ICT2100 | Excavation of HDPE Ducts for ICT Network - (RD-L-3)-Z7-L03-ICT | 2027-03-21 → 2027-09-12 (+175d) | 2027-03-29 → 2027-09-27 (+182d) | 8d → 13d |  |
| RHD4CZ7L03ICT2200 | Installation of HDPE Ducts for ICT Network - (RD-L-3)-Z7-L03-ICT | 2027-03-30 → 2027-09-28 (+182d) | 2027-04-07 → 2027-10-19 (+195d) | 8d → 19d |  |
| RHD4CZ7L03ICT2400 | Backfilling of HDPE Ducts for ICT Network - (RD-L-3)-Z7-L03-ICT | 2027-04-15 → 2027-10-20 (+188d) | 2027-04-24 → 2027-11-03 (+193d) | 8d → 13d |  |
| 6549 | **RHD4-02-002-L03-(ICT)-Information and Communication Technologies Manholes** | 2027-03-30 → 2027-09-28 (+182d) | 2027-04-14 → 2027-10-13 (+182d) |  |  |
| RHD4CZ7L03ICT5100 | Excavation for Manholes for ICT Network - (RD-L-3)-Z7-L03-ICT | 2027-03-30 → 2027-09-28 (+182d) | 2027-04-06 → 2027-10-05 (+182d) |  |  |
| RHD4CZ7L03ICT5200 | Installation of Manholes for ICT Network - (RD-L-3)-Z7-L03-ICT | 2027-04-07 → 2027-10-06 (+182d) | 2027-04-14 → 2027-10-13 (+182d) |  |  |
| 6550 | **RHD4-02-002-L03-(ICT)-Information and Communication Technologies Road Crossings** | 2026-08-16 → 2027-02-08 (+176d) | 2026-08-26 → 2027-03-01 (+187d) |  |  |
| RHD4CZ7L03ICT3100 | Excavation for Road Crossings for ICT Network - (RD-L-3)-Z7-L03-ICT | 2026-08-16 → 2027-02-08 (+176d) | 2026-08-17 → 2027-02-09 (+176d) |  |  |
| RHD4CZ7L03ICT3200 | Installation of Road Crossings for ICT Network - (RD-L-3)-Z7-L03-ICT | 2026-08-18 → 2027-02-20 (+186d) | 2026-08-20 → 2027-02-23 (+187d) |  |  |
| RHD4CZ7L03ICT3300 | Pouring of Road Crossings for ICT Network - (RD-L-3)-Z7-L03-ICT | 2026-08-22 → 2027-02-24 (+186d) | 2026-08-24 → 2027-02-27 (+187d) |  |  |
| RHD4CZ7L03ICT3400 | Backfilling of Road Crossings for ICT Network - (RD-L-3)-Z7-L03-ICT | 2026-08-25 → 2027-02-28 (+187d) | 2026-08-26 → 2027-03-01 (+187d) |  |  |
| 6551 | **RHD4-02-002-Z7-L03-Security Network - CCTV** | 2027-04-25 → 2027-11-04 (+193d) | 2027-05-27 → 2027-12-02 (+189d) |  |  |
| 6552 | **RHD4-02-002-L03-(CCTV)-Civil Works** | 2027-04-25 → 2027-11-04 (+193d) | 2027-04-29 → 2027-11-09 (+194d) |  |  |
| RHD4CZ7L03CCTV2100 | Civil Works for Security Network - (RD-L-3)-Z7-L03-CCTV | 2027-04-25 → 2027-11-04 (+193d) | 2027-04-29 → 2027-11-09 (+194d) |  |  |
| 6553 | **RHD4-02-002-L03-(CCTV)-CCTV Poles** | 2027-05-01 → 2027-11-10 (+193d) | 2027-05-11 → 2027-11-21 (+194d) |  |  |
| RHD4CZ7L03CCTV1100 | Excavation for RC Base for CCTV Poles for Security Network - (RD-L-3)-Z7-L03-CCTV | 2027-05-01 → 2027-11-10 (+193d) | 2027-05-02 → 2027-11-11 (+193d) |  |  |
| RHD4CZ7L03CCTV1200 | Installation for RC Base for CCTV Poles for Security Network - (RD-L-3)-Z7-L03-CCTV | 2027-05-03 → 2027-11-13 (+194d) | 2027-05-04 → 2027-11-14 (+194d) |  |  |
| RHD4CZ7L03CCTV1300 | Backfill for RC Base for CCTV Poles for Security Network - (RD-L-3)-Z7-L03-CCTV | 2027-05-05 → 2027-11-15 (+194d) | 2027-05-06 → 2027-11-16 (+194d) |  |  |

| ID | Task | Start | Finish | Duration | Other |
| --- | --- | --- | --- | --- | --- |
| RHD4CZ7L03CCTV1400 | Installation for CCTV Poles for Security Network - (RD-L-3)-Z7-L03-CCTV | 2027-05-08 → 2027-11-17 (+193d) | 2027-05-09 → 2027-11-18 (+193d) |  |  |
| RHD4CZ7L03CCTV1500 | Protection post Installation for CCTV Poles for Security Network - (RD-L-3)-Z7-L03-CCTV | 2027-05-10 → 2027-11-20 (+194d) | 2027-05-11 → 2027-11-21 (+194d) |  |  |
| 6554 | **RHD4-02-002-L03-(CCTV)-Camera** | 2027-05-12 → 2027-11-22 (+194d) | 2027-05-13 → 2027-11-23 (+194d) |  |  |
| RHD4CZ7L03CCTV3100 | Installation for Cameras for Security Network - (RD-L-3)-Z7-L03-CCTV | 2027-05-12 → 2027-11-22 (+194d) | 2027-05-13 → 2027-11-23 (+194d) |  |  |
| 6555 | **RHD4-02-002-L03-(CCTV)-Power and Infrastructure** | 2027-05-10 → 2027-11-20 (+194d) | 2027-05-13 → 2027-11-23 (+194d) |  |  |
| RHD4CZ7L03CCTV4100 | Installation of Power outlet, UPS and midspan for PTZ Camerafor Cameras for Security Network - (RD-L-3)-Z7-L03-CCTV | 2027-05-10 → 2027-11-20 (+194d) | 2027-05-11 → 2027-11-21 (+194d) |  |  |
| RHD4CZ7L03CCTV4200 | Short Range Wireless PoP wireless Bridgefor CCTV Poles for Security Network - (RD-L-3)-Z7-L03-CCTV | 2027-05-12 → 2027-11-22 (+194d) | 2027-05-13 → 2027-11-23 (+194d) |  |  |
| 6557 | **RHD4-02-002-L03-(CCTV)-CCTV Panels and Components** | 2027-05-19 → 2027-11-24 (+189d) | 2027-05-27 → 2027-12-02 (+189d) |  |  |
| RHD4CZ7L03CCTV6100 | Installation for CCTV Panels for Security Network - (RD-L-3)-Z7-L03-CCTV | 2027-05-19 → 2027-11-24 (+189d) | 2027-05-27 → 2027-12-02 (+189d) |  |  |
| 6757 | **RHD4-02-002-Z7-L131** | 2026-08-16 → 2026-10-27 (+72d) | 2027-08-23 → 2028-01-29 (+159d) |  |  |
| 6936 | **RHD4-02-002-Z7-L131-Road Works - RD** | 2026-08-27 → 2027-02-20 (+177d) | 2027-08-21 → 2028-01-26 (+158d) |  |  |
| 6937 | **RHD4-02-002-L131-(RD)-Subgrade** | 2026-08-27 → 2027-02-20 (+177d) | 2026-08-31 → 2027-02-28 (+181d) |  |  |
| RHD4CZ7L131RD1100 | Supply, lay and compaction subgrade compacted thickness 300 mm for Roads - (RD-L-13/1)-Z7-L131-RD | 2026-08-27 → 2027-02-20 (+177d) | 2026-08-31 → 2027-02-28 (+181d) | 4d → 7d |  |
| 6938 | **RHD4-02-002-L131-(RD)-Aggregate Base Course** | 2026-09-01 → 2027-03-01 (+181d) | 2026-09-06 → 2027-03-07 (+182d) |  |  |
| RHD4CZ7L131RD2100 | Supply, lay and compaction Aggregate base course compacted thickness 300 mmfor Roads - (RD-L-13/1)-Z7-L131-RD | 2026-09-01 → 2027-03-01 (+181d) | 2026-09-06 → 2027-03-07 (+182d) | 5d → 6d |  |
| 6939 | **RHD4-02-002-L131-(RD)-Bituminous base course Two Layers, including (MC1)&(RC2)** | 2026-09-07 → 2027-03-08 (+182d) | 2027-06-01 → 2027-12-07 (+189d) |  |  |
| RHD4CZ7L131RD3100 | Supply, lay and Asphaltic base course including Prime Coat (MC1) for 1st Layer - (RD-L-13/1)-Z7-L131-RD | 2026-09-07 → 2027-03-08 (+182d) | 2026-09-08 → 2027-03-13 (+186d) |  |  |
| RHD4CZ7L131RD3200 | Supply, lay and Asphaltic base course including Tack Coat (RC2) for 2nd Layer - (RD-L-13/1)-Z7-L131-RD | 2027-05-31 → 2027-12-06 (+189d) | 2027-06-01 → 2027-12-07 (+189d) |  |  |
| 6941 | **RHD4-02-002-L131-(RD)-Precast Concrete Curb** | 2027-06-10 → 2027-12-16 (+189d) | 2027-06-16 → 2027-12-22 (+189d) |  |  |
| RHD4CZ7L131RD5100 | Supply and installation Precast Concrete Kerb for Roads - (RD-L-13/1)-Z7-L131-RD | 2027-06-10 → 2027-12-16 (+189d) | 2027-06-16 → 2027-12-22 (+189d) |  |  |
| 6944 | **RHD4-02-002-L131-(RD)-Traffic Signage** | 2027-07-26 → 2028-01-01 (+159d) | 2027-08-01 → 2028-01-06 (+158d) |  |  |
| RHD4CZ7L131RD8100 | Installation of Traffic Signage for Road Network - (RD-L-13/1)-Z7-L131-RD | 2027-07-26 → 2028-01-01 (+159d) | 2027-08-01 → 2028-01-06 (+158d) |  |  |
| 6942 | **RHD4-02-002-L131-(RD)-Precast Interlocking Block Pavers** | 2027-08-02 → 2028-01-08 (+159d) | 2027-08-07 → 2028-01-12 (+158d) |  |  |
| RHD4CZ7L131RD6100 | Interlocking block pavers for sidewalk-footpath for Side walks and Parking areas - (RD-L-13/1)-Z7-L131-RD | 2027-08-02 → 2028-01-08 (+159d) | 2027-08-07 → 2028-01-12 (+158d) |  |  |
| 6940 | **RHD4-02-002-L131-(RD)-Bituminous concrete wearing course including tack coat (RC2)** | 2027-08-15 → 2028-01-20 (+158d) | 2027-08-16 → 2028-01-22 (+159d) |  |  |
| RHD4CZ7L131RD4100 | Supply, lay and compaction Asphaltic wearing course including tack Coat (RC2)for Road Network - (RD-L-13/1)-Z7-L131-RD | 2027-08-15 → 2028-01-20 (+158d) | 2027-08-16 → 2028-01-22 (+159d) |  |  |
| 6943 | **RHD4-02-002-L131-(RD)-Pavement Marking** | 2027-08-17 → 2028-01-23 (+159d) | 2027-08-21 → 2028-01-26 (+158d) |  |  |
| RHD4CZ7L131RD7100 | Pavement Markings for Road Network - (RD-L-13/1)-Z7-L131-RD | 2027-08-17 → 2028-01-23 (+159d) | 2027-08-21 → 2028-01-26 (+158d) |  |  |
| 6761 | **RHD4-02-002-Z7-L131-Storm Network - ST** | 2026-08-16 → 2027-02-08 (+176d) | 2027-01-26 → 2027-06-06 (+131d) |  |  |
| 6779 | **RHD4-02-002-L131-(ST)-MH Works - 1500 mm diameter** | 2027-01-04 → 2027-05-01 (+117d) | 2027-01-26 → 2027-06-06 (+131d) |  |  |
| RHD4CZ7L131ST3101 | Excavation and PC Blinding works for MH 1500 mm - (RD-L-13/1)-Z7-L131-ST | 2027-01-04 → 2027-05-01 (+117d) | 2027-01-07 → 2027-05-06 (+119d) | 4d → 6d |  |
| RHD4CZ7L131ST3201 | Installation of Base for MH 1500 mm - (RD-L-13/1)-Z7-L131-ST | 2027-01-09 → 2027-05-08 (+119d) | 2027-01-12 → 2027-05-13 (+121d) | 4d → 6d |  |
| RHD4CZ7L131ST3301 | MH Ring and C.Slab works and Backfilling works for MH 1500 mm - (RD-L-13/1)-Z7-L131-ST | 2027-01-13 → 2027-05-19 (+126d) | 2027-01-17 → 2027-05-25 (+128d) | 4d → 6d |  |
| RHD4CZ7L131ST3401 | Steel Cover for MH 1500 mm - (RD-L-13/1)-Z7-L131-ST | 2027-01-18 → 2027-05-26 (+128d) | 2027-01-21 → 2027-05-30 (+129d) |  |  |
| RHD4CZ7L131ST3501 | Finishing, Benching, Testing works for MH 1500 mm - (RD-L-13/1)-Z7-L131-ST | 2027-01-23 → 2027-05-31 (+128d) | 2027-01-26 → 2027-06-06 (+131d) | 4d → 6d |  |
| 6008 | **RHD4-02-002-L131-(ST)-GRP Pipes - 600 mm diameter** | 2026-12-30 → 2027-04-26 (+117d) | 2027-01-10 → 2027-05-06 (+116d) |  |  |
| RHD4CZ7L131ST1102 | Excavation works for GRP Pipe Line 600 mm - (RD-L-13/1)-Z7-L131-ST | 2026-12-30 → 2027-04-26 (+117d) | 2026-12-31 → 2027-04-27 (+117d) |  |  |
| RHD4CZ7L131ST1202 | Bedding works for GRP Pipe Line 600 mm - (RD-L-13/1)-Z7-L131-ST | 2027-01-02 → 2027-04-28 (+116d) | 2027-01-03 → 2027-04-29 (+116d) |  |  |
| RHD4CZ7L131ST1302 | Installing for GRP Pipe Line 600 mm - (RD-L-13/1)-Z7-L131-ST | 2027-01-04 → 2027-05-01 (+117d) | 2027-01-05 → 2027-05-02 (+117d) |  |  |
| RHD4CZ7L131ST1402 | Primary Test for GRP Pipe Line 600 mm - (RD-L-13/1)-Z7-L131-ST | 2027-01-06 → 2027-05-03 (+117d) | 2027-01-07 → 2027-05-04 (+117d) |  |  |
| RHD4CZ7L131ST1502 | Backfilling and warning tape works for GRP Pipe Line 600 mm - (RD-L-13/1)-Z7-L131-ST | 2027-01-09 → 2027-05-05 (+116d) | 2027-01-10 → 2027-05-06 (+116d) |  |  |
| 6022 | **RHD4-02-002-L131-(ST)-MH Works - 1200 mm diameter** | 2027-01-04 → 2027-05-01 (+117d) | 2027-01-14 → 2027-05-11 (+117d) |  |  |
| RHD4CZ7L131ST3100 | Excavation and PC Blinding works for MH 1200 mm - (RD-L-13/1)-Z7-L131-ST | 2027-01-04 → 2027-05-01 (+117d) | 2027-01-05 → 2027-05-02 (+117d) |  | resources Skilled labor [7.3 h]; Unskilled Labor [7.3 h]; Equipment Opreator [11.65 h]; Excavator-Poclain [7.3 h]; Water Truck [0.76 h]; Dump Truck [3.59 h]; MH (1200mm Diameter) - ST - depth 1.50 - 2.5m [0.5 nr] → Skilled labor [7.3 h]; Unskilled Labor [7.3 h]; Equipment Opreator [11.65 h]; Excavator-Poclain [7.3 h]; Water Truck [0.8 h]; Dump Truck [3.59 h]; MH (1200mm Diameter) - ST - depth 1.50 - 2.5m [0.5 nr] |
| RHD4CZ7L131ST3200 | Installation of Base for MH 1200 mm - (RD-L-13/1)-Z7-L131-ST | 2027-01-06 → 2027-05-03 (+117d) | 2027-01-07 → 2027-05-04 (+117d) |  |  |
| RHD4CZ7L131ST3300 | MH Ring and C.Slab works and Backfilling works for MH 1200 mm - (RD-L-13/1)-Z7-L131-ST | 2027-01-09 → 2027-05-05 (+116d) | 2027-01-10 → 2027-05-06 (+116d) |  |  |
| RHD4CZ7L131ST3400 | Steel Cover for MH 1200 mm - (RD-L-13/1)-Z7-L131-ST | 2027-01-11 → 2027-05-08 (+117d) | 2027-01-12 → 2027-05-09 (+117d) |  |  |
| RHD4CZ7L131ST3500 | Finishing, Benching, Testing works for MH 1200 mm - (RD-L-13/1)-Z7-L131-ST | 2027-01-13 → 2027-05-10 (+117d) | 2027-01-14 → 2027-05-11 (+117d) |  |  |
| 6767 | **RHD4-02-002-L131-(ST)-GRP Pipes - 900 mm diameter** | 2026-08-16 → 2027-02-08 (+176d) | 2026-08-26 → 2027-02-18 (+176d) |  |  |
| RHD4CZ7L131ST1105 | Excavation works for GRP Pipe Line 900 mm - (RD-L-13/1)-Z7-L131-ST | 2026-08-16 → 2027-02-08 (+176d) | 2026-08-17 → 2027-02-09 (+176d) |  | resources Skilled labor [3.92 h]; Unskilled Labor [3.92 h]; Equipment Opreator [4.68 h]; Excavator-Poclain [3.92 h]; Dump Truck [0.76 h]; GRP (900mm Diameter) - ST - Depth: 1.51m - 2.5m [10.81 m] → Skilled labor [3.92 h]; Unskilled Labor [3.92 h]; Equipment Opreator [4.68 h]; Excavator-Poclain [3.92 h]; Dump Truck [0.8 h]; GRP (900mm Diameter) - ST - Depth: 1.51m - 2.5m [10.81 m] |
| RHD4CZ7L131ST1205 | Bedding works for GRP Pipe Line 900 mm - (RD-L-13/1)-Z7-L131-ST | 2026-08-18 → 2027-02-10 (+176d) | 2026-08-19 → 2027-02-11 (+176d) |  |  |
| RHD4CZ7L131ST1305 | Installing for GRP Pipe Line 900 mm - (RD-L-13/1)-Z7-L131-ST | 2026-08-20 → 2027-02-13 (+177d) | 2026-08-22 → 2027-02-14 (+176d) |  |  |
| RHD4CZ7L131ST1405 | Primary Test for GRP Pipe Line 900 mm - (RD-L-13/1)-Z7-L131-ST | 2026-08-23 → 2027-02-15 (+176d) | 2026-08-24 → 2027-02-16 (+176d) |  |  |
| RHD4CZ7L131ST1505 | Backfilling and warning tape works for GRP Pipe Line 900 mm - (RD-L-13/1)-Z7-L131-ST | 2026-08-25 → 2027-02-17 (+176d) | 2026-08-26 → 2027-02-18 (+176d) |  |  |
| 6766 | **RHD4-02-002-L131-(ST)-GRP Pipes - 800 mm diameter** | 2026-12-24 → 2027-04-20 (+117d) | 2027-01-07 → 2027-05-04 (+117d) |  |  |
| RHD4CZ7L131ST1104 | Excavation works for GRP Pipe Line 800 mm - (RD-L-13/1)-Z7-L131-ST | 2026-12-24 → 2027-04-20 (+117d) | 2026-12-27 → 2027-04-22 (+116d) |  |  |
| RHD4CZ7L131ST1204 | Bedding works for GRP Pipe Line 800 mm - (RD-L-13/1)-Z7-L131-ST | 2026-12-28 → 2027-04-24 (+117d) | 2026-12-30 → 2027-04-26 (+117d) |  |  |
| RHD4CZ7L131ST1304 | Installing for GRP Pipe Line 800 mm - (RD-L-13/1)-Z7-L131-ST | 2026-12-31 → 2027-04-27 (+117d) | 2027-01-02 → 2027-04-28 (+116d) |  |  |
| RHD4CZ7L131ST1404 | Primary Test for GRP Pipe Line 800 mm - (RD-L-13/1)-Z7-L131-ST | 2027-01-03 → 2027-04-29 (+116d) | 2027-01-04 → 2027-05-01 (+117d) |  |  |
| RHD4CZ7L131ST1504 | Backfilling and warning tape works for GRP Pipe Line 800 mm - (RD-L-13/1)-Z7-L131-ST | 2027-01-05 → 2027-05-02 (+117d) | 2027-01-07 → 2027-05-04 (+117d) |  |  |
| 6765 | **RHD4-02-002-L131-(ST)-GRP Pipes - 700 mm diameter** | 2026-12-28 → 2027-04-24 (+117d) | 2027-01-12 → 2027-05-09 (+117d) |  |  |
| RHD4CZ7L131ST1103 | Excavation works for GRP Pipe Line 700 mm - (RD-L-13/1)-Z7-L131-ST | 2026-12-28 → 2027-04-24 (+117d) | 2026-12-29 → 2027-04-25 (+117d) |  |  |
| RHD4CZ7L131ST1203 | Bedding works for GRP Pipe Line 700 mm - (RD-L-13/1)-Z7-L131-ST | 2026-12-30 → 2027-04-26 (+117d) | 2026-12-31 → 2027-04-27 (+117d) |  |  |
| RHD4CZ7L131ST1303 | Installing for GRP Pipe Line 700 mm - (RD-L-13/1)-Z7-L131-ST | 2027-01-03 → 2027-04-29 (+116d) | 2027-01-04 → 2027-05-01 (+117d) |  |  |
| RHD4CZ7L131ST1403 | Primary Test for GRP Pipe Line 700 mm - (RD-L-13/1)-Z7-L131-ST | 2027-01-05 → 2027-05-02 (+117d) | 2027-01-06 → 2027-05-03 (+117d) |  |  |
| RHD4CZ7L131ST1503 | Backfilling and warning tape works for GRP Pipe Line 700 mm - (RD-L-13/1)-Z7-L131-ST | 2027-01-11 → 2027-05-08 (+117d) | 2027-01-12 → 2027-05-09 (+117d) |  |  |
| 6776 | **RHD4-02-002-L131-(ST)-UPVC Pipes - 300 mm diameter** | 2027-01-02 → 2027-04-28 (+116d) | 2027-01-17 → 2027-05-13 (+116d) |  |  |
| RHD4CZ7L131ST2100 | Excavation works for UPVC Pipe Line 300 mm - (RD-L-13/1)-Z7-L131-ST | 2027-01-02 → 2027-04-28 (+116d) | 2027-01-03 → 2027-04-29 (+116d) |  |  |
| RHD4CZ7L131ST2200 | Bedding works for UPVC Pipe Line 300 mm - (RD-L-13/1)-Z7-L131-ST | 2027-01-04 → 2027-05-01 (+117d) | 2027-01-05 → 2027-05-02 (+117d) |  |  |
| RHD4CZ7L131ST2300 | Installing for UPVC Pipe Line 300 mm - (RD-L-13/1)-Z7-L131-ST | 2027-01-11 → 2027-05-08 (+117d) | 2027-01-12 → 2027-05-09 (+117d) |  |  |
| RHD4CZ7L131ST2400 | Primary Test for UPVC Pipe Line 300 mm - (RD-L-13/1)-Z7-L131-ST | 2027-01-13 → 2027-05-10 (+117d) | 2027-01-14 → 2027-05-11 (+117d) |  |  |

| ID | Task | Start | Finish | Duration | Complete | Other |
| --- | --- | --- | --- | --- | --- | --- |
| RHD4CZ7L131ST2500 | Backfilling and warning tape works for UPVC Pipe Line 300 mm - (RD-L-13/1)-Z7-L131-ST | 2027-01-16 → 2027-05-12 (+116d) | 2027-01-17 → 2027-05-13 (+116d) |  |  |  |
| 6784 | **RHD4-02-002-L131-(ST)-Concrete Encasement** | 2027-01-11 → 2027-05-08 (+117d) | 2027-01-12 → 2027-05-09 (+117d) |  |  |  |
| RHD4CZ7L131ST6100 | Pipe Encasement for Storm Pipelines - (RD-L-13/1)-Z7-L131-ST | 2027-01-11 → 2027-05-08 (+117d) | 2027-01-12 → 2027-05-09 (+117d) |  |  |  |
| 6785 | **RHD4-02-002-Z7-L131-Catch Basin - ST** | 2027-01-04 → 2027-05-01 (+117d) | 2027-01-16 → 2027-05-12 (+116d) |  |  |  |
| 6786 | **RHD4-02-002-L131-(ST)-Single Catch Basin Works** | 2027-01-04 → 2027-05-01 (+117d) | 2027-01-16 → 2027-05-12 (+116d) |  |  |  |
| RHD4CZ7L131ST7100 | Excavation works for Single Catch Basin - (RD-L-13/1)-Z7-L131-ST | 2027-01-04 → 2027-05-01 (+117d) | 2027-01-05 → 2027-05-02 (+117d) |  |  |  |
| RHD4CZ7L131ST7200 | PC Blinding, Installation and Pipe connection for Single Catch Basin - (RD-L-13/1)-Z7-L131-ST | 2027-01-06 → 2027-05-03 (+117d) | 2027-01-07 → 2027-05-04 (+117d) |  |  |  |
| RHD4CZ7L131ST7300 | Rings & C.Slab & Final Backfill for Single Catch Basin - (RD-L-13/1)-Z7-L131-ST | 2027-01-09 → 2027-05-05 (+116d) | 2027-01-10 → 2027-05-06 (+116d) |  |  | resources Skilled labor [20.47 h]; Unskilled Labor [40.84 h]; Equipment Opreator [24.5 h]; Boom Truck [4.14 h]; Bobcat [20.47 h]; Single Catch basin - ST [5.25 nr] → Skilled labor [20.47 h]; Unskilled Labor [40.8 h]; Equipment Opreator [24.5 h]; Boom Truck [4.14 h]; Bobcat [20.47 h]; Single Catch basin - ST [5.25 nr] |
| RHD4CZ7L131ST7400 | Steel Cover for Single Catch Basin - (RD-L-13/1)-Z7-L131-ST | 2027-01-11 → 2027-05-08 (+117d) | 2027-01-12 → 2027-05-09 (+117d) |  |  |  |
| RHD4CZ7L131ST7500 | Finishing and Insulation works for Single Catch Basin - (RD-L-13/1)-Z7-L131-ST | 2027-01-13 → 2027-05-10 (+117d) | 2027-01-16 → 2027-05-12 (+116d) |  |  |  |
| 6810 | **RHD4-02-002-Z7-L131-Sewage Network - SW** | 2027-01-17 → 2026-10-27 (-82d) | 2027-03-04 → 2027-07-06 (+124d) |  |  |  |
| 6442 | **RHD4-02-002-L131-(SW)-MH Works - 1200 mm diameter** | 2027-01-17 → 2027-05-13 (+116d) | 2027-02-23 → 2027-07-06 (+133d) |  |  |  |
| RHD4CZ7L131SW3100 | Excavation and PC Blinding works for MH 1200 mm - (RD-L-13/1)-Z7-L131-SW | 2027-01-17 → 2027-05-13 (+116d) | 2027-01-23 → 2027-05-24 (+121d) |  |  |  |
| RHD4CZ7L131SW3200 | Installation of Base for MH 1200 mm - (RD-L-13/1)-Z7-L131-SW | 2027-01-24 → 2027-05-25 (+121d) | 2027-02-04 → 2027-06-06 (+122d) |  |  |  |
| RHD4CZ7L131SW3300 | MH Ring and C.Slab works and Backfilling works for MH 1200 mm - (RD-L-13/1)-Z7-L131-SW | 2027-02-06 → 2027-06-07 (+121d) | 2027-02-10 → 2027-06-19 (+129d) | 5d → 11d |  |  |
| RHD4CZ7L131SW3400 | Steel Cover for MH 1200 mm - (RD-L-13/1)-Z7-L131-SW | 2027-02-11 → 2027-06-20 (+129d) | 2027-02-15 → 2027-06-23 (+128d) |  |  | resources Skilled labor [39.97 h]; Unskilled Labor [79.83 h]; Equipment Opreator [7.95 h]; Boom Truck [7.95 h]; MH (1200mm Diameter) - SW - depth 2.51 - 3.5m [0.2 nr]; MH (1200mm Diameter) - SW - depth 3.51 -4.5m [0.05 nr]; MH (1200mm Diameter) - SW - depth 4.51 -5.5m [0.3 nr] → Skilled labor [40 h]; Unskilled Labor [79.83 h]; Equipment Opreator [7.95 h]; Boom Truck [7.95 h]; MH (1200mm Diameter) - SW - depth 2.51 - 3.5m [0.2 nr]; MH (1200mm Diameter) - SW - depth 3.51 -4.5m [0.05 nr]; MH (1200mm Diameter) - SW - depth 4.51 -5.5m [0.3 nr] |
| RHD4CZ7L131SW3500 | Finishing, Benching, Testing works for MH 1200 mm - (RD-L-13/1)-Z7-L131-SW | 2027-02-16 → 2027-06-24 (+128d) | 2027-02-23 → 2027-07-06 (+133d) | 6d → 11d |  |  |
| 957 | **RHD4-02-002-L131-(SW)-MH Works - 1200 mm diameter with Back drop** | 2027-01-24 → 2027-05-25 (+121d) | 2027-02-03 → 2027-06-05 (+122d) |  |  |  |
| RHD4CZ7L131SW3101 | Excavation and PC Blinding works for MH 1200 mm - (RD-L-13/1)-Z7-L131-SW | 2027-01-24 → 2027-05-25 (+121d) | 2027-01-25 → 2027-05-26 (+121d) |  |  |  |
| RHD4CZ7L131SW3201 | Installation of Base for MH 1200 mm - (RD-L-13/1)-Z7-L131-SW | 2027-01-26 → 2027-05-27 (+121d) | 2027-01-27 → 2027-05-29 (+122d) |  |  |  |
| RHD4CZ7L131SW3301 | MH Ring and C.Slab works and Backfilling works for MH 1200 mm - (RD-L-13/1)-Z7-L131-SW | 2027-01-28 → 2027-05-30 (+122d) | 2027-01-30 → 2027-05-31 (+121d) |  |  |  |
| RHD4CZ7L131SW3401 | Steel Cover for MH 1200 mm - (RD-L-13/1)-Z7-L131-SW | 2027-01-31 → 2027-06-01 (+121d) | 2027-02-01 → 2027-06-02 (+121d) |  |  |  |
| RHD4CZ7L131SW3501 | Finishing, Benching, Testing works for MH 1200 mm - (RD-L-13/1)-Z7-L131-SW | 2027-02-02 → 2027-06-03 (+121d) | 2027-02-03 → 2027-06-05 (+122d) |  |  |  |
| 6434 | **RHD4-02-002-L131-(SW)-GRP Pipes - 400 mm diameter** | 2027-01-17 → 2026-10-27 (-82d) | 2027-03-04 → 2027-07-03 (+121d) |  |  |  |
| RHD4CZ7L131SW1101 | Excavation works for GRP Pipe Line 400 mm - (RD-L-13/1)-Z7-L131-SW | 2027-01-17 → 2026-10-27 A (-82d) | 2027-01-20 → 2026-10-29 A (-83d) |  | 0% → 100% |  |
| RHD4CZ7L131SW1201 | Bedding works for GRP Pipe Line 400 mm - (RD-L-13/1)-Z7-L131-SW | 2027-01-21 → 2026-10-29 A (-84d) | 2027-01-25 → 2027-05-22 (+117d) |  | 0% → 43% |  |
| RHD4CZ7L131SW1301 | Installing for GRP Pipe Line 400 mm - (RD-L-13/1)-Z7-L131-SW | 2027-02-11 → 2026-10-31 A (-103d) | 2027-02-15 → 2027-06-23 (+128d) |  | 0% → 29% |  |
| RHD4CZ7L131SW1401 | Primary Test for GRP Pipe Line 400 mm - (RD-L-13/1)-Z7-L131-SW | 2027-02-16 → 2027-06-24 (+128d) | 2027-02-20 → 2027-06-28 (+128d) |  |  |  |
| RHD4CZ7L131SW1501 | Backfilling and warning tape works for GRP Pipe Line 400 mm - (RD-L-13/1)-Z7-L131-SW | 2027-03-01 → 2027-06-29 (+120d) | 2027-03-04 → 2027-07-03 (+121d) |  |  |  |
| 6438 | **RHD4-02-002-L131-(SW)-UPVC Pipes - 200 mm diameter** | 2027-01-21 → 2027-05-13 (+112d) | 2027-02-01 → 2027-05-29 (+117d) |  |  |  |
| RHD4CZ7L131SW2100 | Excavation works for UPVC Pipe Line 200 mm - (RD-L-13/1)-Z7-L131-SW | 2027-01-21 → 2027-05-13 (+112d) | 2027-01-23 → 2027-05-19 (+116d) |  |  | resources Skilled labor [3.81 h]; Unskilled Labor [3.81 h]; Equipment Opreator [4.57 h]; Excavator-Poclain [3.81 h]; Dump Truck [0.76 h]; UPVC (200mm Diameter) - SW - Depth: 1.51m - 2.5m [4.39 m]; UPVC (200mm Diameter) - SW - Depth: 2.51m - 3.5m [4.58 m] → Skilled labor [3.81 h]; Unskilled Labor [3.81 h]; Equipment Opreator [4.57 h]; Excavator-Poclain [3.81 h]; Dump Truck [0.8 h]; UPVC (200mm Diameter) - SW - Depth: 1.51m - 2.5m [4.39 m]; UPVC (200mm Diameter) - SW - Depth: 2.51m - 3.5m [4.58 m] |
| RHD4CZ7L131SW2200 | Bedding works for UPVC Pipe Line 200 mm - (RD-L-13/1)-Z7-L131-SW | 2027-01-24 → 2027-05-20 (+116d) | 2027-01-25 → 2027-05-22 (+117d) |  |  |  |
| RHD4CZ7L131SW2300 | Installing for UPVC Pipe Line 200 mm - (RD-L-13/1)-Z7-L131-SW | 2027-01-26 → 2027-05-23 (+117d) | 2027-01-27 → 2027-05-24 (+117d) |  |  |  |
| RHD4CZ7L131SW2400 | Primary Test for UPVC Pipe Line 200 mm - (RD-L-13/1)-Z7-L131-SW | 2027-01-28 → 2027-05-25 (+117d) | 2027-01-30 → 2027-05-26 (+116d) |  |  |  |
| RHD4CZ7L131SW2500 | Backfilling and warning tape works for UPVC Pipe Line 200 mm - (RD-L-13/1)-Z7-L131-SW | 2027-01-31 → 2027-05-27 (+116d) | 2027-02-01 → 2027-05-29 (+117d) |  |  |  |
| 6847 | **RHD4-02-002-Z7-L131-Potable Network - PT** | 2027-02-04 → 2027-06-06 (+122d) | 2027-03-31 → 2027-07-26 (+117d) |  |  |  |
| 6848 | **RHD4-02-002-L131-(PT)-HDPE Pipes - 110 mm diameter** | 2027-02-08 → 2027-06-09 (+121d) | 2027-03-13 → 2027-07-07 (+116d) |  |  |  |
| RHD4CZ7L131PT1100 | Excavation works for HDPE Pipline 110 mm - (RD-L-13/1)-Z7-L131-PT | 2027-02-08 → 2027-06-09 (+121d) | 2027-02-09 → 2027-06-10 (+121d) |  |  | resources Skilled labor [1.42 h]; Unskilled Labor [1.42 h]; Equipment Opreator [1.63 h]; Excavator-Poclain [1.42 h]; Dump Truck [0.33 h]; HDPE (110mm Diameter) - PT - Depth: less than 1.5m [3.14 m] → Skilled labor [1.42 h]; Unskilled Labor [1.42 h]; Equipment Opreator [1.6 h]; Excavator-Poclain [1.42 h]; Dump Truck [0.33 h]; HDPE (110mm Diameter) - PT - Depth: less than 1.5m [3.14 m] |
| RHD4CZ7L131PT1200 | Bedding works for HDPE Pipline 110 mm - (RD-L-13/1)-Z7-L131-PT | 2027-02-11 → 2027-06-13 (+122d) | 2027-02-13 → 2027-06-14 (+121d) |  |  |  |
| RHD4CZ7L131PT1300 | Installing for HDPE Pipline 110 mm - (RD-L-13/1)-Z7-L131-PT | 2027-02-17 → 2027-06-19 (+122d) | 2027-02-18 → 2027-06-20 (+122d) |  |  |  |
| RHD4CZ7L131PT1400 | Primary Test for HDPE Pipline 110 mm - (RD-L-13/1)-Z7-L131-PT | 2027-03-03 → 2027-07-01 (+120d) | 2027-03-04 → 2027-07-03 (+121d) |  |  |  |
| RHD4CZ7L131PT1500 | Backfilling and warning tape works for HDPE Pipline 110 mm - (RD-L-13/1)-Z7-L131-PT | 2027-03-08 → 2027-07-06 (+120d) | 2027-03-13 → 2027-07-07 (+116d) |  |  |  |
| 6849 | **RHD4-02-002-L131-(PT)-HDPE Pipes - 160 mm diameter** | 2027-02-04 → 2027-06-06 (+122d) | 2027-03-07 → 2027-07-05 (+120d) |  |  |  |
| RHD4CZ7L131PT1101 | Excavation works for HDPE Pipline 160 mm - (RD-L-13/1)-Z7-L131-PT | 2027-02-04 → 2027-06-06 (+122d) | 2027-02-07 → 2027-06-08 (+121d) |  |  |  |
| RHD4CZ7L131PT1201 | Bedding works for HDPE Pipline 160 mm - (RD-L-13/1)-Z7-L131-PT | 2027-02-08 → 2027-06-09 (+121d) | 2027-02-10 → 2027-06-12 (+122d) |  |  |  |
| RHD4CZ7L131PT1301 | Installing for HDPE Pipline 160 mm - (RD-L-13/1)-Z7-L131-PT | 2027-02-11 → 2027-06-13 (+122d) | 2027-02-16 → 2027-06-17 (+121d) |  |  |  |
| RHD4CZ7L131PT1401 | Primary Test for HDPE Pipline 160 mm - (RD-L-13/1)-Z7-L131-PT | 2027-03-01 → 2027-06-29 (+120d) | 2027-03-02 → 2027-06-30 (+120d) |  |  |  |
| RHD4CZ7L131PT1501 | Backfilling and warning tape works for HDPE Pipline 160 mm - (RD-L-13/1)-Z7-L131-PT | 2027-03-03 → 2027-07-01 (+120d) | 2027-03-07 → 2027-07-05 (+120d) |  |  |  |
| 6853 | **RHD4-02-002-L131-(PT)-Gate Valves (Direct Buried)** | 2027-02-17 → 2027-06-19 (+122d) | 2027-03-15 → 2027-07-10 (+117d) |  |  |  |
| RHD4CZ7L131PT3100 | Installation for Direct Buried Gate Valves - (RD-L-13/1)-Z7-L131-PT | 2027-02-17 → 2027-06-19 (+122d) | 2027-02-18 → 2027-06-20 (+122d) |  |  |  |
| RHD4CZ7L131PT3200 | Stem and Service box for Direct Buried Gate Valves - (RD-L-13/1)-Z7-L131-PT | 2027-03-14 → 2027-07-08 (+116d) | 2027-03-15 → 2027-07-10 (+117d) |  |  |  |
| 6858 | **RHD4-02-002-L131-(PT)-Air Valve Chambers** | 2027-02-10 → 2027-06-12 (+122d) | 2027-02-18 → 2027-06-20 (+122d) |  |  |  |
| RHD4CZ7L131PT2102 | Excavation and Bedding for Air Valve Chambers for Potable Water Network - (RD-L-13/1)-Z7-L131-PT | 2027-02-10 → 2027-06-12 (+122d) | 2027-02-11 → 2027-06-13 (+122d) |  |  |  |
| RHD4CZ7L131PT2202 | PC works for Air Valve Chambers for Potable Water Network - (RD-L-13/1)-Z7-L131-PT | 2027-02-13 → 2027-06-14 (+121d) | 2027-02-14 → 2027-06-15 (+121d) |  |  |  |
| RHD4CZ7L131PT2302 | Installation for Air Valve Chambers for Potable Water Network - (RD-L-13/1)-Z7-L131-PT | 2027-02-15 → 2027-06-16 (+121d) | 2027-02-16 → 2027-06-17 (+121d) |  |  |  |
| RHD4CZ7L131PT2402 | Backfilling works for Air Valve Chambers for Potable Water Network - (RD-L-13/1)-Z7-L131-PT | 2027-02-17 → 2027-06-19 (+122d) | 2027-02-18 → 2027-06-20 (+122d) |  |  |  |
| 6859 | **RHD4-02-002-L131-(PT)-Air Valves** | 2027-02-17 → 2027-06-19 (+122d) | 2027-02-21 → 2027-06-22 (+121d) |  |  |  |
| RHD4CZ7L131PT3103 | Installation for Air Valves for Potable Water Network - (RD-L-13/1)-Z7-L131-PT | 2027-02-17 → 2027-06-19 (+122d) | 2027-02-18 → 2027-06-20 (+122d) |  |  |  |
| RHD4CZ7L131PT3203 | Stem and Service box for Air Valves for Potable Water Network - (RD-L-13/1)-Z7-L131-PT | 2027-02-20 → 2027-06-21 (+121d) | 2027-02-21 → 2027-06-22 (+121d) |  |  |  |
| 6860 | **RHD4-02-002-L131-(PT)-Fire Hydrant** | 2027-03-14 → 2027-07-08 (+116d) | 2027-03-31 → 2027-07-26 (+117d) |  |  |  |
| RHD4CZ7L131PT4100 | Excavation and Bedding and Pipe Installation for Fire Hydrant - (RD-L-13/1)-Z7-L131-PT | 2027-03-14 → 2027-07-08 (+116d) | 2027-03-18 → 2027-07-13 (+117d) |  |  |  |
| RHD4CZ7L131PT4200 | Valve Installation for Fire Hydrant - (RD-L-13/1)-Z7-L131-PT | 2027-03-20 → 2027-07-14 (+116d) | 2027-03-22 → 2027-07-17 (+117d) |  |  |  |
| RHD4CZ7L131PT4300 | Stem for Fire Hydrant - (RD-L-13/1)-Z7-L131-PT | 2027-03-23 → 2027-07-18 (+117d) | 2027-03-25 → 2027-07-20 (+117d) |  |  |  |
| RHD4CZ7L131PT4400 | Fire Installation for Fire Hydrant - (RD-L-13/1)-Z7-L131-PT | 2027-03-27 → 2027-07-21 (+116d) | 2027-03-29 → 2027-07-24 (+117d) |  |  |  |
| RHD4CZ7L131PT4500 | Protection Barriers for Fire Hydrant - (RD-L-13/1)-Z7-L131-PT | 2027-03-30 → 2027-07-25 (+117d) | 2027-03-31 → 2027-07-26 (+117d) |  |  |  |
| 6861 | **RHD4-02-002-L131-(PT)-Concrete Encasement** | 2027-02-17 → 2027-06-19 (+122d) | 2027-02-28 → 2027-06-28 (+120d) |  |  |  |
| RHD4CZ7L131PT5100 | Pipe Encasement for Potable Pipelines - (RD-L-13/1)-Z7-L131-PT | 2027-02-17 → 2027-06-19 (+122d) | 2027-02-28 → 2027-06-28 (+120d) |  |  |  |
| 6862 | **RHD4-02-002-Z7-L131-Irrigation Network - IRR** | 2027-02-10 → 2027-06-12 (+122d) | 2027-04-05 → 2027-07-31 (+117d) |  |  |  |
| 6863 | **RHD4-02-002-L131-(IRR)-HDPE Pipes - 160 mm diameter** | 2027-02-10 → 2027-06-12 (+122d) | 2027-03-06 → 2027-07-04 (+120d) |  |  |  |
| RHD4CZ7L131IRR1100 | Excavation works for HDPE Pipline 160 mm - (RD-L-13/1)-Z7-L131-IRR | 2027-02-10 → 2027-06-12 (+122d) | 2027-02-15 → 2027-06-16 (+121d) |  |  |  |

| ID | Task | Start | Finish | Other |
| --- | --- | --- | --- | --- |
| RHD4CZ7L131IRR1200 | Bedding works for HDPE Pipline 160 mm - (RD-L-13/1)-Z7-L131-IRR | 2027-02-16 → 2027-06-17 (+121d) | 2027-02-20 → 2027-06-21 (+121d) |  |
| RHD4CZ7L131IRR1300 | Installing for HDPE Pipline 160 mm - (RD-L-13/1)-Z7-L131-IRR | 2027-02-21 → 2027-06-22 (+121d) | 2027-02-27 → 2027-06-27 (+120d) |  |
| RHD4CZ7L131IRR1400 | Primary Test for HDPE Pipline 160 mm - (RD-L-13/1)-Z7-L131-IRR | 2027-02-28 → 2027-06-28 (+120d) | 2027-03-01 → 2027-06-29 (+120d) |  |
| RHD4CZ7L131IRR1500 | Backfilling and warning tape works for HDPE Pipline 160 mm - (RD-L-13/1)-Z7-L131-IRR | 2027-03-02 → 2027-06-30 (+120d) | 2027-03-06 → 2027-07-04 (+120d) |  |
| 6685 | **RHD4-02-002-L131-(IRR)-Wash out Chamber** | 2027-02-16 → 2027-06-17 (+121d) | 2027-02-25 → 2027-06-26 (+121d) |  |
| RHD4CZ7L131IRR2101 | Excavation and Bedding for Wash out Chamber for Irrigation Network - (RD-L-13/1)-Z7-L131-IRR | 2027-02-16 → 2027-06-17 (+121d) | 2027-02-17 → 2027-06-19 (+122d) |  |
| RHD4CZ7L131IRR2201 | PC works for Wash out Chamber for Irrigation Network - (RD-L-13/1)-Z7-L131-IRR | 2027-02-18 → 2027-06-20 (+122d) | 2027-02-20 → 2027-06-21 (+121d) |  |
| RHD4CZ7L131IRR2301 | Installation for Wash out Chamber for Irrigation Network - (RD-L-13/1)-Z7-L131-IRR | 2027-02-21 → 2027-06-22 (+121d) | 2027-02-23 → 2027-06-23 (+120d) |  |
| RHD4CZ7L131IRR2401 | Backfilling works for Wash out Chamber for Irrigation Network - (RD-L-13/1)-Z7-L131-IRR | 2027-02-24 → 2027-06-24 (+120d) | 2027-02-25 → 2027-06-26 (+121d) |  |
| 6871 | **RHD4-02-002-L131-(IRR)-Gate Valves (Direct Buried)** | 2027-04-01 → 2027-07-27 (+117d) | 2027-04-05 → 2027-07-31 (+117d) |  |
| RHD4CZ7L131IRR3100 | Installation for Direct Buried Gate Valves - (RD-L-13/1)-Z7-L131-IRR | 2027-04-01 → 2027-07-27 (+117d) | 2027-04-03 → 2027-07-28 (+116d) |  |
| RHD4CZ7L131IRR3200 | Stem and Service box for Direct Buried Gate Valves - (RD-L-13/1)-Z7-L131-IRR | 2027-04-04 → 2027-07-29 (+116d) | 2027-04-05 → 2027-07-31 (+117d) |  |
| 6876 | **RHD4-02-002-L131-(IRR)-Air Valve Chamber** | 2027-02-16 → 2027-06-17 (+121d) | 2027-02-25 → 2027-06-26 (+121d) |  |
| RHD4CZ7L131IRR2102 | Excavation and Bedding for Valve Chamber for Irrigation Network - (RD-L-13/1)-Z7-L131-IRR | 2027-02-16 → 2027-06-17 (+121d) | 2027-02-17 → 2027-06-19 (+122d) |  |
| RHD4CZ7L131IRR2202 | PC works for Valve Chamber for Irrigation Network - (RD-L-13/1)-Z7-L131-IRR | 2027-02-18 → 2027-06-20 (+122d) | 2027-02-20 → 2027-06-21 (+121d) |  |
| RHD4CZ7L131IRR2302 | Installation for Valve Chamber for Irrigation Network - (RD-L-13/1)-Z7-L131-IRR | 2027-02-21 → 2027-06-22 (+121d) | 2027-02-23 → 2027-06-23 (+120d) |  |
| RHD4CZ7L131IRR2402 | Backfilling works for Valve Chamber for Irrigation Network - (RD-L-13/1)-Z7-L131-IRR | 2027-02-24 → 2027-06-24 (+120d) | 2027-02-25 → 2027-06-26 (+121d) |  |
| 6877 | **RHD4-02-002-L131-(IRR)-Air Valves** | 2027-02-24 → 2027-06-24 (+120d) | 2027-02-28 → 2027-06-28 (+120d) |  |
| RHD4CZ7L131IRR3103 | Installation for Air Valves for Irrigation Network - (RD-L-13/1)-Z7-L131-IRR | 2027-02-24 → 2027-06-24 (+120d) | 2027-02-25 → 2027-06-26 (+121d) |  |
| RHD4CZ7L131IRR3203 | Stem and Service box for Air Valves for Irrigation Network - (RD-L-13/1)-Z7-L131-IRR | 2027-02-27 → 2027-06-27 (+120d) | 2027-02-28 → 2027-06-28 (+120d) |  |
| 6686 | **RHD4-02-002-L131-(IRR)-Wash out Valves** | 2027-02-24 → 2027-06-24 (+120d) | 2027-02-28 → 2027-06-28 (+120d) |  |
| RHD4CZ7L131IRR3102 | Installation for Wash out Valve for Irrigation Network - (RD-L-13/1)-Z7-L131-IRR | 2027-02-24 → 2027-06-24 (+120d) | 2027-02-25 → 2027-06-26 (+121d) |  |
| RHD4CZ7L131IRR3202 | Stem and Service box for Wash out Valve for Irrigation Network - (RD-L-13/1)-Z7-L131-IRR | 2027-02-27 → 2027-06-27 (+120d) | 2027-02-28 → 2027-06-28 (+120d) |  |
| 6896 | **RHD4-02-002-Z7-L131-Medium Voltage Network - MV** | 2026-12-31 → 2027-04-27 (+117d) | 2027-03-28 → 2027-09-08 (+164d) |  |
| 6897 | **RHD4-02-002-L131-(MV)-Medium Voltage cable trench** | 2026-12-31 → 2027-04-27 (+117d) | 2027-03-28 → 2027-09-08 (+164d) |  |
| RHD4CZ7L131MV1100 | Excavation for Medium Voltage Trench - (RD-L-13/1)-Z7-L131-MV | 2026-12-31 → 2027-04-27 (+117d) | 2027-01-05 → 2027-05-02 (+117d) | resources Skilled labor [54.45 h]; Unskilled Labor [108.79 h]; Equipment Opreator [163.25 h]; Excavator-Poclain [54.45 h]; Dump Truck [108.79 h]; Excavation for Trench size 60cm wide and 80cm deep ( for 2 cables) [349.71 m3] → Skilled labor [54.45 h]; Unskilled Labor [108.8 h]; Equipment Opreator [163.25 h]; Excavator-Poclain [54.45 h]; Dump Truck [108.8 h]; Excavation for Trench size 60cm wide and 80cm deep ( for 2 cables) [349.71 m3] |
| RHD4CZ7L131MV1200 | Trench Backfilling for Medium Voltage Network - (RD-L-13/1)-Z7-L131-MV | 2027-03-23 → 2027-09-04 (+165d) | 2027-03-28 → 2027-09-08 (+164d) | resources Skilled labor [54.45 h]; Unskilled Labor [54.45 h]; Equipment Opreator [108.79 h]; Dump Truck [108.79 h]; Excavation for Trench size 60cm wide and 80cm deep ( for 2 cables) [149.87 m3] → Skilled labor [54.45 h]; Unskilled Labor [54.45 h]; Equipment Opreator [108.8 h]; Dump Truck [108.8 h]; Excavation for Trench size 60cm wide and 80cm deep ( for 2 cables) [149.87 m3] |
| 6899 | **RHD4-02-002-L131-(MV)-Medium Voltage cables 3Cx 500 mm²** | 2027-01-06 → 2027-05-03 (+117d) | 2027-01-17 → 2027-05-13 (+116d) |  |
| RHD4CZ7L131MV3100 | Installation of Medium Voltage Cables 3Cx 500 mm² - (RD-L-13/1)-Z7-L131-MV | 2027-01-06 → 2027-05-03 (+117d) | 2027-01-09 → 2027-05-05 (+116d) | resources Skilled labor [22.76 h]; Unskilled Labor [91.26 h]; Electrician [45.63 h]; Equipment Opreator [68.39 h]; Boom Truck [22.76 h]; Cable Laying Machine [45.63 h]; Cable 13.8 kV 3Cx 500 mm² Al/XLPE,/LLDPE / Unarmored [942.45 m] → Skilled labor [22.76 h]; Unskilled Labor [91.26 h]; Electrician [45.6 h]; Equipment Opreator [68.39 h]; Boom Truck [22.76 h]; Cable Laying Machine [45.6 h]; Cable 13.8 kV 3Cx 500 mm² Al/XLPE,/LLDPE / Unarmored [942.45 m] |
| RHD4CZ7L131MV3200 | Joints Installation of Medium Voltage Cables 3Cx 500 mm² - (RD-L-13/1)-Z7-L131-MV | 2027-01-10 → 2027-05-06 (+116d) | 2027-01-11 → 2027-05-08 (+117d) |  |
| RHD4CZ7L131MV3300 | Testing of Medium Voltage Cables 3Cx 500 mm² - (RD-L-13/1)-Z7-L131-MV | 2027-01-12 → 2027-05-09 (+117d) | 2027-01-14 → 2027-05-11 (+117d) | resources Skilled labor [22.76 h]; Unskilled Labor [91.26 h]; Electrician [45.63 h]; Cable 13.8 kV 3Cx 500 mm² Al/XLPE,/LLDPE / Unarmored [104.72 m] → Skilled labor [22.76 h]; Unskilled Labor [91.26 h]; Electrician [45.6 h]; Cable 13.8 kV 3Cx 500 mm² Al/XLPE,/LLDPE / Unarmored [104.72 m] |
| RHD4CZ7L131MV3400 | Termination of Medium Voltage Cables 3Cx 500 mm² - (RD-L-13/1)-Z7-L131-MV | 2027-01-16 → 2027-05-12 (+116d) | 2027-01-17 → 2027-05-13 (+116d) |  |
| 6900 | **RHD4-02-002-L131-(MV)-Medium Voltage cables 3Cx 50 mm²** | 2027-01-16 → 2027-05-12 (+116d) | 2027-01-17 → 2027-05-13 (+116d) |  |
| RHD4CZ7L131MV3401 | Termination of Medium Voltage Cables 3Cx 50 mm² - (RD-L-13/1)-Z7-L131-MV | 2027-01-16 → 2027-05-12 (+116d) | 2027-01-17 → 2027-05-13 (+116d) |  |
| 6903 | **RHD4-02-002-Z7-L131-Low Voltage Network - LV** | 2027-04-06 → 2027-09-09 (+156d) | 2027-04-26 → 2027-09-30 (+157d) |  |
| 6904 | **RHD4-02-002-L131-(LV)-Low Voltage duct banks** | 2027-04-06 → 2027-09-09 (+156d) | 2027-04-14 → 2027-09-18 (+157d) |  |
| RHD4CZ7L131LV2100 | Excavation of Duct Banks for Low Voltage Network - (RD-L-13/1)-Z7-L131-LV | 2027-04-06 → 2027-09-09 (+156d) | 2027-04-07 → 2027-09-11 (+157d) |  |
| RHD4CZ7L131LV2200 | Installation of Duct Banks for Low Voltage Network - (RD-L-13/1)-Z7-L131-LV | 2027-04-08 → 2027-09-12 (+157d) | 2027-04-10 → 2027-09-13 (+156d) |  |
| RHD4CZ7L131LV2300 | Pouring of Duct Banks for Low Voltage Network - (RD-L-13/1)-Z7-L131-LV | 2027-04-11 → 2027-09-14 (+156d) | 2027-04-12 → 2027-09-15 (+156d) | resources Skilled labor [8.28 h]; Unskilled Labor [8.28 h]; Equipment Opreator [3.38 h]; Concrete Mixer Truck [1.63 h]; Concrete Pump [1.63 h]; Duct bank for LV cables UPVC (2xø110mm) [7.46 m] → Skilled labor [8.28 h]; Unskilled Labor [8.28 h]; Equipment Opreator [3.38 h]; Concrete Mixer Truck [1.6 h]; Concrete Pump [1.6 h]; Duct bank for LV cables UPVC (2xø110mm) [7.46 m] |
| RHD4CZ7L131LV2400 | Backfilling of Duct Banks for Low Voltage Network - (RD-L-13/1)-Z7-L131-LV | 2027-04-13 → 2027-09-16 (+156d) | 2027-04-14 → 2027-09-18 (+157d) |  |
| 6905 | **RHD4-02-002-L131-(LV)-Low Voltage Drawpit** | 2027-04-13 → 2027-09-16 (+156d) | 2027-04-17 → 2027-09-20 (+156d) |  |
| RHD4CZ7L131LV5100 | Excavation of Drawpit size 900x900x1000mm for Low Voltage Network - (RD-L-13/1)-Z7-L131-LV | 2027-04-13 → 2027-09-16 (+156d) | 2027-04-14 → 2027-09-18 (+157d) | resources Skilled labor [1.85 h]; Unskilled Labor [1.85 h]; Equipment Opreator [1.42 h]; Excavator-Poclain [0.76 h]; Dump Truck [0.76 h]; Drawpit with medium duty steel cover, size900x900x1000mm, [0.3 Unit] → Skilled labor [1.85 h]; Unskilled Labor [1.85 h]; Equipment Opreator [1.42 h]; Excavator-Poclain [0.8 h]; Dump Truck [0.8 h]; Drawpit with medium duty steel cover, size900x900x1000mm, [0.3 Unit] |
| RHD4CZ7L131LV5200 | Installation of Drawpit size 900x900x1000mm for Low Voltage Network - (RD-L-13/1)-Z7-L131-LV | 2027-04-15 → 2027-09-19 (+157d) | 2027-04-17 → 2027-09-20 (+156d) | resources Skilled labor [1.85 h]; Unskilled Labor [1.85 h]; Equipment Opreator [0.76 h]; Boom Truck [0.76 h]; Drawpit with medium duty steel cover, size900x900x1000mm, [1.7 Unit] → Skilled labor [1.85 h]; Unskilled Labor [1.85 h]; Equipment Opreator [0.8 h]; Boom Truck [0.8 h]; Drawpit with medium duty steel cover, size900x900x1000mm, [1.7 Unit] |
| 6906 | **RHD4-02-002-L131-(LV)-Low Voltage cables** | 2027-04-18 → 2027-09-21 (+156d) | 2027-04-26 → 2027-09-30 (+157d) |  |
| RHD4CZ7L131LV3100 | Excavation for Low Voltage Cables for Low Voltage Network - (RD-L-13/1)-Z7-L131-LV | 2027-04-18 → 2027-09-21 (+156d) | 2027-04-19 → 2027-09-22 (+156d) |  |
| RHD4CZ7L131LV3200 | Cable Laying of Low Voltage Cables for Low Voltage Network - (RD-L-13/1)-Z7-L131-LV | 2027-04-20 → 2027-09-25 (+158d) | 2027-04-21 → 2027-09-26 (+158d) |  |
| RHD4CZ7L131LV3300 | Warning tape and Backfill for Low Voltage Cables for Low Voltage Network - (RD-L-13/1)-Z7-L131-LV | 2027-04-22 → 2027-09-27 (+158d) | 2027-04-24 → 2027-09-28 (+157d) |  |
| RHD4CZ7L131LV3400 | Testing of Low Voltage Cables for Low Voltage Network - (RD-L-13/1)-Z7-L131-LV | 2027-04-25 → 2027-09-29 (+157d) | 2027-04-26 → 2027-09-30 (+157d) |  |
| 6909 | **RHD4-02-002-Z7-L131-Street Lighting Network - SL** | 2027-04-08 → 2027-09-12 (+157d) | 2027-06-16 → 2027-11-16 (+153d) |  |
| 6910 | **RHD4-02-002-L131-(SL)-Street Lighting duct banks** | 2027-04-08 → 2027-09-12 (+157d) | 2027-04-17 → 2027-09-20 (+156d) |  |
| RHD4CZ7L131SL2100 | Excavation of Duct Banks for Street Lighting Network - (RD-L-13/1)-Z7-L131-SL | 2027-04-08 → 2027-09-12 (+157d) | 2027-04-10 → 2027-09-13 (+156d) |  |
| RHD4CZ7L131SL2200 | Installation of Duct Banks for Street Lighting Network - (RD-L-13/1)-Z7-L131-SL | 2027-04-11 → 2027-09-14 (+156d) | 2027-04-12 → 2027-09-15 (+156d) |  |
| RHD4CZ7L131SL2300 | Pouring of Duct Banks for Street Lighting Network - (RD-L-13/1)-Z7-L131-SL | 2027-04-13 → 2027-09-16 (+156d) | 2027-04-14 → 2027-09-18 (+157d) |  |
| RHD4CZ7L131SL2400 | Backfilling of Duct Banks for Street Lighting Network - (RD-L-13/1)-Z7-L131-SL | 2027-04-15 → 2027-09-19 (+157d) | 2027-04-17 → 2027-09-20 (+156d) |  |
| 6911 | **RHD4-02-002-L131-(SL)-Street Lighting Drawpit** | 2027-04-27 → 2027-10-02 (+158d) | 2027-05-01 → 2027-10-05 (+157d) |  |
| RHD4CZ7L131SL5100 | Excavation of Drawpit size 600x600x900mm for Street Lighting Network - (RD-L-13/1)-Z7-L131-SL | 2027-04-27 → 2027-10-02 (+158d) | 2027-04-28 → 2027-10-03 (+158d) | resources Skilled labor [1.85 h]; Unskilled Labor [1.85 h]; Equipment Opreator [1.42 h]; Excavator-Poclain [0.76 h]; Dump Truck [0.76 h]; Drawpit with medium duty steel cover, size600x600x900mm, [0.3 Unit] → Skilled labor [1.85 h]; Unskilled Labor [1.85 h]; Equipment Opreator [1.42 h]; Excavator-Poclain [0.8 h]; Dump Truck [0.8 h]; Drawpit with medium duty steel cover, size600x600x900mm, [0.3 Unit] |
| RHD4CZ7L131SL5200 | Installation of Drawpit size 600x600x900mm for Street Lighting Network - (RD-L-13/1)-Z7-L131-SL | 2027-04-29 → 2027-10-04 (+158d) | 2027-05-01 → 2027-10-05 (+157d) | resources Skilled labor [1.85 h]; Unskilled Labor [1.85 h]; Equipment Opreator [0.76 h]; Boom Truck [0.76 h]; Drawpit with medium duty steel cover, size600x600x900mm, [1.7 Unit] → Skilled labor [1.85 h]; Unskilled Labor [1.85 h]; Equipment Opreator [0.8 h]; Boom Truck [0.8 h]; Drawpit with medium duty steel cover, size600x600x900mm, [1.7 Unit] |
| 6912 | **RHD4-02-002-L131-(SL)-Street Lighting cables** | 2027-05-02 → 2027-10-06 (+157d) | 2027-05-27 → 2027-10-27 (+153d) |  |
| RHD4CZ7L131SL3100 | Excavation for Street Lighting Cables for Street Lighting Network - (RD-L-13/1)-Z7-L131-SL | 2027-05-02 → 2027-10-06 (+157d) | 2027-05-08 → 2027-10-12 (+157d) |  |
| RHD4CZ7L131SL3200 | Cable Laying of Street Lighting Cables for Street Lighting Network - (RD-L-13/1)-Z7-L131-SL | 2027-05-09 → 2027-10-13 (+157d) | 2027-05-13 → 2027-10-18 (+158d) |  |
| RHD4CZ7L131SL3300 | Warning tape and Backfill for Street Lighting Cables for Street Lighting Network - (RD-L-13/1)-Z7-L131-SL | 2027-05-19 → 2027-10-19 (+153d) | 2027-05-24 → 2027-10-24 (+153d) |  |
| RHD4CZ7L131SL3400 | Testing of Street Lighting Cables for Street Lighting Network - (RD-L-13/1)-Z7-L131-SL | 2027-05-25 → 2027-10-25 (+153d) | 2027-05-27 → 2027-10-27 (+153d) |  |
| 6913 | **RHD4-02-002-L131-(SL)-Street Lighting Poles** | 2027-05-29 → 2027-10-28 (+152d) | 2027-06-16 → 2027-11-16 (+153d) |  |
| RHD4CZ7L131SL1100 | Excavation for RC Base for Lighting Poles for Street Lighting Network - (RD-L-13/1)-Z7-L131-SL | 2027-05-29 → 2027-10-28 (+152d) | 2027-05-31 → 2027-10-31 (+153d) |  |
| RHD4CZ7L131SL1200 | Installation for RC Base for Lighting Poles for Street Lighting Network - (RD-L-13/1)-Z7-L131-SL | 2027-06-01 → 2027-11-01 (+153d) | 2027-06-03 → 2027-11-03 (+153d) |  |
| RHD4CZ7L131SL1300 | Backfill for RC Base for Lighting Poles for Street Lighting Network - (RD-L-13/1)-Z7-L131-SL | 2027-06-05 → 2027-11-04 (+152d) | 2027-06-07 → 2027-11-07 (+153d) |  |
| RHD4CZ7L131SL1400 | Installation for Lighting Poles for Street Lighting Network - (RD-L-13/1)-Z7-L131-SL | 2027-06-08 → 2027-11-08 (+153d) | 2027-06-13 → 2027-11-13 (+153d) |  |
| RHD4CZ7L131SL1500 | Luminaire Installation for Lighting Poles for Street Lighting Network - (RD-L-13/1)-Z7-L131-SL | 2027-06-14 → 2027-11-14 (+153d) | 2027-06-16 → 2027-11-16 (+153d) | resources Unskilled Labor [63.93 h]; Electrician [31.91 h]; Equipment Opreator [6.43 h]; Boom Truck [12.74 h]; Street Lighting( LED) Luminaire of Output ?10898 lumen [44 Unit] → Unskilled Labor [63.93 h]; Electrician [31.91 h]; Equipment Opreator [6.4 h]; Boom Truck [12.74 h]; Street Lighting( LED) Luminaire of Output ?10898 lumen [44 Unit] |
| 6921 | **RHD4-02-002-Z7-L131-Telecommunications Network - TC** | 2027-04-11 → 2027-09-14 (+156d) | 2027-07-05 → 2027-12-11 (+159d) |  |
| 6922 | **RHD4-02-002-L131-(TC)-Telecommunications Ducts** | 2027-06-17 → 2027-11-17 (+153d) | 2027-07-05 → 2027-12-11 (+159d) |  |

| ID | Task | Start | Finish | Duration | Other |
| --- | --- | --- | --- | --- | --- |
| RHD4CZ7L131TC2100 | Excavation of HDPE Ducts for Telecom Network - (RD-L-13/1)-Z7-L131-TC | 2027-06-17 → 2027-11-17 (+153d) | 2027-06-20 → 2027-11-25 (+158d) | 3d → 8d | resources Skilled labor [82.44 h]; Unskilled Labor [82.44 h]; Equipment Opreator [164.99 h]; Excavator-Poclain [82.44 h]; Dump Truck [82.44 h]; (6*50mm) HDPE ducts -TC [110.5 m]; (6*50mm+2*32mm) HDPE ducts -TC [103.68 m]; (6*50mm+4*32mm) HDPE ducts -TC [7.8 m]; (2*32mm) HDPE ducts -TC [5.22 m] → Skilled labor [82.4 h]; Unskilled Labor [82.4 h]; Equipment Opreator [164.99 h]; Excavator-Poclain [82.4 h]; Dump Truck [82.4 h]; (6*50mm) HDPE ducts -TC [110.5 m]; (6*50mm+2*32mm) HDPE ducts -TC [103.68 m]; (6*50mm+4*32mm) HDPE ducts -TC [7.8 m]; (2*32mm) HDPE ducts -TC [5.22 m] |
| RHD4CZ7L131TC2200 | Installation of HDPE Ducts for Telecom Network - (RD-L-13/1)-Z7-L131-TC | 2027-06-21 → 2027-11-27 (+159d) | 2027-06-26 → 2027-12-01 (+158d) |  |  |
| RHD4CZ7L131TC2400 | Backfilling of HDPE Ducts for Telecom Network - (RD-L-13/1)-Z7-L131-TC | 2027-06-27 → 2027-12-02 (+158d) | 2027-07-05 → 2027-12-11 (+159d) |  | resources Skilled labor [82.44 h]; Unskilled Labor [82.44 h]; Equipment Opreator [33 h]; Excavator-Poclain [33 h]; (6*50mm) HDPE ducts -TC [82.88 m]; (6*50mm+2*32mm) HDPE ducts -TC [77.76 m]; (6*50mm+4*32mm) HDPE ducts -TC [5.85 m]; (2*32mm) HDPE ducts -TC [3.92 m] → Skilled labor [82.4 h]; Unskilled Labor [82.4 h]; Equipment Opreator [33 h]; Excavator-Poclain [33 h]; (6*50mm) HDPE ducts -TC [82.88 m]; (6*50mm+2*32mm) HDPE ducts -TC [77.76 m]; (6*50mm+4*32mm) HDPE ducts -TC [5.85 m]; (2*32mm) HDPE ducts -TC [3.92 m] |
| 6923 | **RHD4-02-002-L131-(TC)-Telecommunications Manholes** | 2027-06-21 → 2027-11-27 (+159d) | 2027-06-27 → 2027-12-02 (+158d) |  |  |
| RHD4CZ7L131TC5100 | Excavation for Manholes for Telecom Network - (RD-L-13/1)-Z7-L131-TC | 2027-06-21 → 2027-11-27 (+159d) | 2027-06-23 → 2027-11-29 (+159d) |  |  |
| RHD4CZ7L131TC5200 | Installation of Manholes for Telecom Network - (RD-L-13/1)-Z7-L131-TC | 2027-06-24 → 2027-11-30 (+159d) | 2027-06-27 → 2027-12-02 (+158d) |  |  |
| 6924 | **RHD4-02-002-L131-(TC)-Telecomminications Road Crossings** | 2027-04-11 → 2027-09-14 (+156d) | 2027-05-01 → 2027-10-05 (+157d) |  |  |
| RHD4CZ7L131TC3100 | Excavation for Road Crossings for Telecom Network - (RD-L-13/1)-Z7-L131-TC | 2027-04-11 → 2027-09-14 (+156d) | 2027-04-14 → 2027-09-18 (+157d) |  | resources Skilled labor [39.21 h]; Unskilled Labor [39.21 h]; Equipment Opreator [78.41 h]; Excavator-Poclain [39.21 h]; Dump Truck [39.21 h]; Road crossing ducts, (6*50mm) HDPE -TC [7.2 m] → Skilled labor [39.2 h]; Unskilled Labor [39.2 h]; Equipment Opreator [78.4 h]; Excavator-Poclain [39.2 h]; Dump Truck [39.2 h]; Road crossing ducts, (6*50mm) HDPE -TC [7.2 m] |
| RHD4CZ7L131TC3200 | Installation of Road Crossings for Telecom Network - (RD-L-13/1)-Z7-L131-TC | 2027-04-15 → 2027-09-19 (+157d) | 2027-04-20 → 2027-09-25 (+158d) |  |  |
| RHD4CZ7L131TC3300 | Pouring of Road Crossings for Telecom Network - (RD-L-13/1)-Z7-L131-TC | 2027-04-21 → 2027-09-26 (+158d) | 2027-04-26 → 2027-09-30 (+157d) |  |  |
| RHD4CZ7L131TC3400 | Backfilling of Road Crossings for Telecom Network - (RD-L-13/1)-Z7-L131-TC | 2027-04-27 → 2027-10-02 (+158d) | 2027-05-01 → 2027-10-05 (+157d) |  | resources Skilled labor [39.21 h]; Unskilled Labor [39.21 h]; Equipment Opreator [15.68 h]; Excavator-Poclain [15.68 h]; Road crossing ducts, (6*50mm) HDPE -TC [10.8 m] → Skilled labor [39.2 h]; Unskilled Labor [39.2 h]; Equipment Opreator [15.68 h]; Excavator-Poclain [15.68 h]; Road crossing ducts, (6*50mm) HDPE -TC [10.8 m] |
| 6925 | **RHD4-02-002-Z7-L131-Information and Communication Technologies - ICT** | 2027-04-15 → 2027-09-19 (+157d) | 2027-07-25 → 2027-12-30 (+158d) |  |  |
| 6926 | **RHD4-02-002-L131-(ICT)-Information and Communication Technologies Ducts** | 2027-06-28 → 2027-12-04 (+159d) | 2027-07-25 → 2027-12-30 (+158d) |  |  |
| RHD4CZ7L131ICT2100 | Excavation of HDPE Ducts for ICT Network - (RD-L-13/1)-Z7-L131-ICT | 2027-06-28 → 2027-12-04 (+159d) | 2027-07-06 → 2027-12-12 (+159d) |  |  |
| RHD4CZ7L131ICT2200 | Installation of HDPE Ducts for ICT Network - (RD-L-13/1)-Z7-L131-ICT | 2027-07-07 → 2027-12-13 (+159d) | 2027-07-12 → 2027-12-18 (+159d) |  |  |
| RHD4CZ7L131ICT2400 | Backfilling of HDPE Ducts for ICT Network - (RD-L-13/1)-Z7-L131-ICT | 2027-07-17 → 2027-12-22 (+158d) | 2027-07-25 → 2027-12-30 (+158d) |  |  |
| 6927 | **RHD4-02-002-L131-(ICT)-Information and Communication Technologies Manholes** | 2027-07-07 → 2027-12-13 (+159d) | 2027-07-15 → 2027-12-21 (+159d) |  |  |
| RHD4CZ7L131ICT5100 | Excavation for Manholes for ICT Network - (RD-L-13/1)-Z7-L131-ICT | 2027-07-07 → 2027-12-13 (+159d) | 2027-07-11 → 2027-12-16 (+158d) |  | resources Skilled labor [13.61 h]; Unskilled Labor [13.61 h]; Equipment Opreator [10.89 h]; Excavator-Poclain [5.45 h]; Dump Truck [5.45 h]; Manhole Type 1 - ICT [0.6 nr]; Manhole Type 2 - ICT [0.45 nr] → Skilled labor [13.6 h]; Unskilled Labor [13.6 h]; Equipment Opreator [10.89 h]; Excavator-Poclain [5.45 h]; Dump Truck [5.45 h]; Manhole Type 1 - ICT [0.6 nr]; Manhole Type 2 - ICT [0.45 nr] |
| RHD4CZ7L131ICT5200 | Installation of Manholes for ICT Network - (RD-L-13/1)-Z7-L131-ICT | 2027-07-12 → 2027-12-18 (+159d) | 2027-07-15 → 2027-12-21 (+159d) |  | resources Skilled labor [13.61 h]; Unskilled Labor [13.61 h]; Equipment Opreator [5.45 h]; Boom Truck [5.45 h]; Manhole Type 1 - ICT [3.4 nr]; Manhole Type 2 - ICT [2.55 nr] → Skilled labor [13.6 h]; Unskilled Labor [13.6 h]; Equipment Opreator [5.45 h]; Boom Truck [5.45 h]; Manhole Type 1 - ICT [3.4 nr]; Manhole Type 2 - ICT [2.55 nr] |
| 6928 | **RHD4-02-002-L131-(ICT)-Information and Communication Technologies Road Crossings** | 2027-04-15 → 2027-09-19 (+157d) | 2027-05-09 → 2027-10-13 (+157d) |  |  |
| RHD4CZ7L131ICT3100 | Excavation for Road Crossings for ICT Network - (RD-L-13/1)-Z7-L131-ICT | 2027-04-15 → 2027-09-19 (+157d) | 2027-04-19 → 2027-09-22 (+156d) |  |  |
| RHD4CZ7L131ICT3200 | Installation of Road Crossings for ICT Network - (RD-L-13/1)-Z7-L131-ICT | 2027-04-21 → 2027-09-26 (+158d) | 2027-04-27 → 2027-10-02 (+158d) |  |  |
| RHD4CZ7L131ICT3300 | Pouring of Road Crossings for ICT Network - (RD-L-13/1)-Z7-L131-ICT | 2027-04-28 → 2027-10-03 (+158d) | 2027-05-04 → 2027-10-09 (+158d) |  |  |
| RHD4CZ7L131ICT3400 | Backfilling of Road Crossings for ICT Network - (RD-L-13/1)-Z7-L131-ICT | 2027-05-05 → 2027-10-10 (+158d) | 2027-05-09 → 2027-10-13 (+157d) |  |  |
| 6929 | **RHD4-02-002-Z7-L131-Security Network - CCTV** | 2027-07-26 → 2028-01-01 (+159d) | 2027-08-23 → 2028-01-29 (+159d) |  |  |
| 6930 | **RHD4-02-002-L131-(CCTV)-Civil Works** | 2027-07-26 → 2028-01-01 (+159d) | 2027-07-31 → 2028-01-05 (+158d) |  |  |
| RHD4CZ7L131CCTV2100 | Civil Works for Security Network - (RD-L-13/1)-Z7-L131-CCTV | 2027-07-26 → 2028-01-01 (+159d) | 2027-07-31 → 2028-01-05 (+158d) |  |  |
| 4851 | **RHD4-02-002-L131-(CCTV)-CCTV Poles** | 2027-08-01 → 2028-01-06 (+158d) | 2027-08-11 → 2028-01-17 (+159d) |  |  |
| RHD4CZ7L131CCTV1100 | Excavation for RC Base for CCTV Poles for Security Network - (RD-L-13/1)-Z7-L131-CCTV | 2027-08-01 → 2028-01-06 (+158d) | 2027-08-02 → 2028-01-08 (+159d) |  |  |
| RHD4CZ7L131CCTV1200 | Installation for RC Base for CCTV Poles for Security Network - (RD-L-13/1)-Z7-L131-CCTV | 2027-08-03 → 2028-01-09 (+159d) | 2027-08-04 → 2028-01-10 (+159d) |  |  |
| RHD4CZ7L131CCTV1300 | Backfill for RC Base for CCTV Poles for Security Network - (RD-L-13/1)-Z7-L131-CCTV | 2027-08-05 → 2028-01-11 (+159d) | 2027-08-07 → 2028-01-12 (+158d) |  |  |
| RHD4CZ7L131CCTV1400 | Installation for CCTV Poles for Security Network - (RD-L-13/1)-Z7-L131-CCTV | 2027-08-08 → 2028-01-13 (+158d) | 2027-08-09 → 2028-01-15 (+159d) |  |  |
| RHD4CZ7L131CCTV1500 | Protection post Installation for CCTV Poles for Security Network - (RD-L-13/1)-Z7-L131-CCTV | 2027-08-10 → 2028-01-16 (+159d) | 2027-08-11 → 2028-01-17 (+159d) |  |  |
| 4852 | **RHD4-02-002-L131-(CCTV)-Camera** | 2027-08-12 → 2028-01-18 (+159d) | 2027-08-14 → 2028-01-19 (+158d) |  |  |
| RHD4CZ7L131CCTV3100 | Installation for Cameras for Security Network - (RD-L-13/1)-Z7-L131-CCTV | 2027-08-12 → 2028-01-18 (+159d) | 2027-08-14 → 2028-01-19 (+158d) |  |  |
| 4853 | **RHD4-02-002-L131-(CCTV)-Power and Infrastructure** | 2027-08-10 → 2028-01-16 (+159d) | 2027-08-14 → 2028-01-19 (+158d) |  |  |
| RHD4CZ7L131CCTV4100 | Installation of Power outlet, UPS and midspan for PTZ Camerafor Cameras for Security Network - (RD-L-13/1)-Z7-L131-CCTV | 2027-08-10 → 2028-01-16 (+159d) | 2027-08-11 → 2028-01-17 (+159d) |  |  |
| RHD4CZ7L131CTV4200 | Short Range Wireless PoP wireless Bridgefor CCTV Poles for Security Network - (RD-C-2)-Z7-C02-CCTV | 2027-08-12 → 2028-01-18 (+159d) | 2027-08-14 → 2028-01-19 (+158d) |  | resources Skilled labor [10.88 h]; Unskilled Labor [21.76 h]; Electrician [10.88 h]; Equipment Opreator [21.76 h]; Excavator-Poclain [5.45 h]; Dump Truck [5.45 h]; Short Range wireless point to point wireless bridge → Skilled labor [10.88 h]; Unskilled Labor [21.76 h]; Electrician [10.88 h]; Equipment Opreator [21.76 h]; Excavator-Poclain [5.44 h]; Dump Truck [5.44 h]; Short Range wireless point to point wireless bridge |
| 4855 | **RHD4-02-002-L131-(CCTV)-CCTV Panels and Components** | 2027-08-15 → 2028-01-20 (+158d) | 2027-08-23 → 2028-01-29 (+159d) |  |  |
| RHD4CZ7L131CCTV6100 | Installation for CCTV Panels for Security Network - (RD-L-13/1)-Z7-L131-CCTV | 2027-08-15 → 2028-01-20 (+158d) | 2027-08-23 → 2028-01-29 (+159d) |  |  |
| 7135 | **RHD4-02-002-Z7-C013** | 2026-08-29 → 2027-02-10 (+165d) | 2027-08-30 → 2028-02-05 (+159d) |  |  |
| 7314 | **RHD4-02-002-Z7-C013-Road Works - RD** | 2026-09-06 → 2027-03-15 (+190d) | 2027-08-30 → 2028-02-05 (+159d) |  |  |
| 7315 | **RHD4-02-002-C013-(RD)-Subgrade** | 2026-09-06 → 2027-03-15 (+190d) | 2026-09-14 → 2027-03-28 (+195d) |  |  |
| RHD4CZ7C013RD1100 | Supply, lay and compaction subgrade compacted thickness 300 mm for Roads - (RD-C-1/3)-Z7-C013-RD | 2026-09-06 → 2027-03-15 (+190d) | 2026-09-14 → 2027-03-28 (+195d) | 8d → 12d | resources Skilled labor [125.35 h]; Unskilled Labor [250.7 h]; Electrician [125.35 h]; Equipment Opreator [855.98 h]; Water Truck [41.38 h]; Roller compactor [62.62 h]; Grader [125.35 h]; Dump Truck [626.63 h]; Subgrade [6027.67 m3] → Skilled labor [125.35 h]; Unskilled Labor [250.7 h]; Electrician [125.35 h]; Equipment Opreator [856 h]; Water Truck [41.38 h]; Roller compactor [62.62 h]; Grader [125.35 h]; Dump Truck [626.63 h]; Subgrade [6027.67 m3] |
| 7316 | **RHD4-02-002-C013-(RD)-Aggregate Base Course** | 2026-09-15 → 2027-03-29 (+195d) | 2026-09-26 → 2027-04-07 (+193d) |  |  |
| RHD4CZ7C013RD2100 | Supply, lay and compaction Aggregate base course compacted thickness 300 mmfor Roads - (RD-C-1/3)-Z7-C013-RD | 2026-09-15 → 2027-03-29 (+195d) | 2026-09-26 → 2027-04-07 (+193d) |  | resources Skilled labor [46.39 h]; Unskilled Labor [92.79 h]; Equipment Opreator [587.64 h]; Water Truck [30.6 h]; Roller compactor [92.79 h]; Grader [92.79 h]; Dump Truck [371.36 h]; Aggregate Base Courses [3785.98 m3] → Skilled labor [46.4 h]; Unskilled Labor [92.8 h]; Equipment Opreator [587.64 h]; Water Truck [30.6 h]; Roller compactor [92.8 h]; Grader [92.8 h]; Dump Truck [371.36 h]; Aggregate Base Courses [3785.98 m3] |
| 7317 | **RHD4-02-002-C013-(RD)-Bituminous base course Two Layers, including (MC1)&(RC2)** | 2026-09-27 → 2027-04-08 (+193d) | 2027-06-06 → 2027-12-12 (+189d) |  |  |
| RHD4CZ7C013RD3100 | Supply, lay and Asphaltic base course including Prime Coat (MC1) for 1st Layer - (RD-C-1/3)-Z7-C013-RD | 2026-09-27 → 2027-04-08 (+193d) | 2026-09-30 → 2027-04-12 (+194d) |  | resources Skilled labor [36.81 h]; Unskilled Labor [221.18 h]; Equipment Opreator [552.9 h]; Bobcat [36.81 h]; Roller compactor [36.81 h]; Asphalt Paver [36.81 h]; Rubber Compactor [73.73 h]; MC1/RC2 Sprinkler [36.81 h]; Dump Truck [331.72 h]; Bituminous base course (Grading I - Class A), including Prime coat (MC1) & tack coate (RC2) [1348.58 m3] → Skilled labor [36.8 h]; Unskilled Labor [221.18 h]; Equipment Opreator [552.9 h]; Bobcat [36.8 h]; Roller compactor [36.8 h]; Asphalt Paver [36.8 h]; Rubber Compactor [73.73 h]; MC1/RC2 Sprinkler [36.8 h]; Dump Truck [331.72 h]; Bituminous base course (Grading I - Class A), including Prime coat (MC1) & tack coate (RC2) [1348.58 m3] |
| RHD4CZ7C013RD3200 | Supply, lay and Asphaltic base course including Tack Coat (RC2) for 2nd Layer - (RD-C-1/3)-Z7-C013-RD | 2027-06-02 → 2027-12-08 (+189d) | 2027-06-06 → 2027-12-12 (+189d) |  | resources Skilled labor [36.81 h]; Unskilled Labor [221.18 h]; Equipment Opreator [552.9 h]; Bobcat [36.81 h]; Roller compactor [36.81 h]; Asphalt Paver [36.81 h]; Rubber Compactor [73.73 h]; MC1/RC2 Sprinkler [36.81 h]; Dump Truck [331.72 h]; Bituminous base course (Grading I - Class A), including Prime coat (MC1) & tack coate (RC2) [1348.58 m3] → Skilled labor [36.8 h]; Unskilled Labor [221.18 h]; Equipment Opreator [552.9 h]; Bobcat [36.8 h]; Roller compactor [36.8 h]; Asphalt Paver [36.8 h]; Rubber Compactor [73.73 h]; MC1/RC2 Sprinkler [36.8 h]; Dump Truck [331.72 h]; Bituminous base course (Grading I - Class A), including Prime coat (MC1) & tack coate (RC2) [1348.58 m3] |
| 7319 | **RHD4-02-002-C013-(RD)-Precast Concrete Curb** | 2027-06-07 → 2027-12-13 (+189d) | 2027-06-12 → 2027-12-18 (+189d) |  |  |
| RHD4CZ7C013RD5100 | Supply and installation Precast Concrete Kerb for Roads - (RD-C-1/3)-Z7-C013-RD | 2027-06-07 → 2027-12-13 (+189d) | 2027-06-12 → 2027-12-18 (+189d) |  | resources Mason [152.46 h]; Skilled labor [50.86 h]; Unskilled Labor [152.46 h]; Equipment Opreator [101.61 h]; Bobcat [50.86 h]; Concrete Mixer Truck [50.86 h]; Precast Concrete Curbstone, type K1 [2100 m] → Mason [152.46 h]; Skilled labor [50.86 h]; Unskilled Labor [152.46 h]; Equipment Opreator [101.6 h]; Bobcat [50.86 h]; Concrete Mixer Truck [50.86 h]; Precast Concrete Curbstone, type K1 [2100 m] |
| 7322 | **RHD4-02-002-C013-(RD)-Traffic Signage** | 2027-08-24 → 2028-01-30 (+159d) | 2027-08-30 → 2028-02-05 (+159d) |  |  |
| RHD4CZ7C013RD8100 | Installation of Traffic Signage for Road Network - (RD-C-1/3)-Z7-C013-RD | 2027-08-24 → 2028-01-30 (+159d) | 2027-08-30 → 2028-02-05 (+159d) |  |  |
| 7318 | **RHD4-02-002-C013-(RD)-Bituminous concrete wearing course including tack coat (RC2)** | 2027-06-13 → 2027-12-19 (+189d) | 2027-06-14 → 2027-12-20 (+189d) |  |  |
| RHD4CZ7C013RD4100 | Supply, lay and compaction Asphaltic wearing course including tack Coat (RC2)for Road Network - (RD-C-1/3)-Z7-C013-RD | 2027-06-13 → 2027-12-19 (+189d) | 2027-06-14 → 2027-12-20 (+189d) |  | resources Skilled labor [18.95 h]; Unskilled Labor [113.91 h]; Equipment Opreator [284.78 h]; Bobcat [18.95 h]; Roller compactor [18.95 h]; Asphalt Paver [18.95 h]; Rubber Compactor [38.01 h]; MC1/RC2 Sprinkler [18.95 h]; Dump Truck [170.87 h]; Bituminous concrete wearing course, (Grading I - Class A), including tack coat (RC2) [905.67 m3] → Skilled labor [18.95 h]; Unskilled Labor [113.91 h]; Equipment Opreator [284.8 h]; Bobcat [18.95 h]; Roller compactor [18.95 h]; Asphalt Paver [18.95 h]; Rubber Compactor [38.01 h]; MC1/RC2 Sprinkler [18.95 h]; Dump Truck [170.87 h]; Bituminous concrete wearing course, (Grading I - Class A), including tack coat (RC2) [905.67 m3] |
| 7321 | **RHD4-02-002-C013-(RD)-Pavement Marking** | 2027-06-15 → 2027-12-21 (+189d) | 2027-06-21 → 2027-12-27 (+189d) |  |  |
| RHD4CZ7C013RD7100 | Pavement Markings for Road Network - (RD-C-1/3)-Z7-C013-RD | 2027-06-15 → 2027-12-21 (+189d) | 2027-06-21 → 2027-12-27 (+189d) |  |  |
| 7240 | **RHD4-02-002-Z7-C013-Irrigation Network - IRR** | 2026-08-29 → 2027-02-10 (+165d) | 2026-10-10 → 2027-04-17 (+189d) |  |  |
| 1770 | **RHD4-02-002-C013-(IRR)-Air Valves** | 2026-10-04 → 2027-03-22 (+169d) | 2026-10-07 → 2027-03-25 (+169d) |  |  |
| RHD4CZ7C013IRR3103 | Installation for Air Valves for Irrigation Network - (RD-C-1/3)-Z7-C013-IRR | 2026-10-04 → 2027-03-22 (+169d) | 2026-10-05 → 2027-03-23 (+169d) |  |  |
| RHD4CZ7C013IRR3203 | Stem and Service box for Air Valves for Irrigation Network - (RD-C-1/3)-Z7-C013-IRR | 2026-10-06 → 2027-03-24 (+169d) | 2026-10-07 → 2027-03-25 (+169d) |  |  |
| 7245 | **RHD4-02-002-C013-(IRR)-HDPE Pipes - 315 mm diameter** | 2026-08-29 → 2027-02-10 (+165d) | 2026-09-08 → 2027-02-21 (+166d) |  |  |
| RHD4CZ7C013IRR1104 | Excavation works for HDPE Pipline 315 mm - (RD-C-1/3)-Z7-C013-IRR | 2026-08-29 → 2027-02-10 (+165d) | 2026-08-30 → 2027-02-11 (+165d) |  |  |
| RHD4CZ7C013IRR1204 | Bedding works for HDPE Pipline 315 mm - (RD-C-1/3)-Z7-C013-IRR | 2026-08-31 → 2027-02-13 (+166d) | 2026-09-01 → 2027-02-14 (+166d) |  |  |
| RHD4CZ7C013IRR1304 | Installing for HDPE Pipline 315 mm - (RD-C-1/3)-Z7-C013-IRR | 2026-09-02 → 2027-02-15 (+166d) | 2026-09-03 → 2027-02-16 (+166d) |  |  |
| RHD4CZ7C013IRR1404 | Primary Test for HDPE Pipline 315 mm - (RD-C-1/3)-Z7-C013-IRR | 2026-09-05 → 2027-02-17 (+165d) | 2026-09-06 → 2027-02-18 (+165d) |  |  |
| RHD4CZ7C013IRR1504 | Backfilling and warning tape works for HDPE Pipline 315 mm - (RD-C-1/3)-Z7-C013-IRR | 2026-09-07 → 2027-02-20 (+166d) | 2026-09-08 → 2027-02-21 (+166d) |  |  |
| 6107 | **RHD4-02-002-C013-(IRR)-HDPE Pipes - 160 mm diameter** | 2026-08-31 → 2027-02-13 (+166d) | 2026-09-10 → 2027-02-24 (+167d) |  |  |
| RHD4CZ7C013IRR1100 | Excavation works for HDPE Pipline 160 mm - (RD-C-1/3)-Z7-C013-IRR | 2026-08-31 → 2027-02-13 (+166d) | 2026-09-01 → 2027-02-14 (+166d) |  | resources Skilled labor [4.03 h]; Unskilled Labor [4.03 h]; Equipment Opreator [4.9 h]; Excavator-Poclain [4.03 h]; Dump Truck [0.76 h]; HDPE (160mm Diameter) - TSE - Depth: less than 1.5m [5.6 m] → Skilled labor [4 h]; Unskilled Labor [4 h]; Equipment Opreator [4.9 h]; Excavator-Poclain [4 h]; Dump Truck [0.8 h]; HDPE (160mm Diameter) - TSE - Depth: less than 1.5m [5.6 m] |
| RHD4CZ7C013IRR1200 | Bedding works for HDPE Pipline 160 mm - (RD-C-1/3)-Z7-C013-IRR | 2026-09-02 → 2027-02-15 (+166d) | 2026-09-03 → 2027-02-16 (+166d) |  |  |

| ID | Task | Start | Finish | Duration | Complete | Other |
| --- | --- | --- | --- | --- | --- | --- |
| RHD4CZ7C013IRR1300 | Installing for HDPE Pipline 160 mm - (RD-C-1/3)-Z7-C013-IRR | 2026-09-05 → 2027-02-17 (+165d) | 2026-09-06 → 2027-02-18 (+165d) |  |  | resources Unskilled Labor [8.17 h]; Plumber [4.03 h]; Equipment Opreator [4.03 h]; Boom Truck [4.03 h]; HDPE (160mm Diameter) - TSE - Depth: less than 1.5m [25.2 m] → Unskilled Labor [8.17 h]; Plumber [4 h]; Equipment Opreator [4 h]; Boom Truck [4 h]; HDPE (160mm Diameter) - TSE - Depth: less than 1.5m [25.2 m] |
| RHD4CZ7C013IRR1400 | Primary Test for HDPE Pipline 160 mm - (RD-C-1/3)-Z7-C013-IRR | 2026-09-07 → 2027-02-20 (+166d) | 2026-09-08 → 2027-02-21 (+166d) |  |  |  |
| RHD4CZ7C013IRR1500 | Backfilling and warning tape works for HDPE Pipline 160 mm - (RD-C-1/3)-Z7-C013-IRR | 2026-09-09 → 2027-02-23 (+167d) | 2026-09-10 → 2027-02-24 (+167d) |  |  |  |
| 6115 | **RHD4-02-002-C013-(IRR)-Gate Valves (Direct Buried)** | 2026-10-06 → 2027-04-13 (+189d) | 2026-10-10 → 2027-04-17 (+189d) |  |  |  |
| RHD4CZ7C013IRR3100 | Installation for Direct Buried Gate Valves - (RD-C-1/3)-Z7-C013-IRR | 2026-10-06 → 2027-04-13 (+189d) | 2026-10-07 → 2027-04-14 (+189d) |  |  |  |
| RHD4CZ7C013IRR3200 | Stem and Service box for Direct Buried Gate Valves - (RD-C-1/3)-Z7-C013-IRR | 2026-10-08 → 2027-04-15 (+189d) | 2026-10-10 → 2027-04-17 (+189d) |  |  |  |
| 1769 | **RHD4-02-002-C013-(IRR)-Air Valve Chamber** | 2026-09-27 → 2027-03-15 (+169d) | 2026-10-05 → 2027-03-23 (+169d) |  |  |  |
| RHD4CZ7C013IRR2102 | Excavation and Bedding for Valve Chamber for Irrigation Network - (RD-C-1/3)-Z7-C013-IRR | 2026-09-27 → 2027-03-15 (+169d) | 2026-09-28 → 2027-03-16 (+169d) |  |  |  |
| RHD4CZ7C013IRR2202 | PC works for Valve Chamber for Irrigation Network - (RD-C-1/3)-Z7-C013-IRR | 2026-09-29 → 2027-03-17 (+169d) | 2026-09-30 → 2027-03-18 (+169d) |  |  |  |
| RHD4CZ7C013IRR2302 | Installation for Valve Chamber for Irrigation Network - (RD-C-1/3)-Z7-C013-IRR | 2026-10-01 → 2027-03-20 (+170d) | 2026-10-03 → 2027-03-21 (+169d) |  |  |  |
| RHD4CZ7C013IRR2402 | Backfilling works for Valve Chamber for Irrigation Network - (RD-C-1/3)-Z7-C013-IRR | 2026-10-04 → 2027-03-22 (+169d) | 2026-10-05 → 2027-03-23 (+169d) |  |  |  |
| 8188 | **RHD4-02-002-C013-(IRR)-HDPE Pipes - 180 mm diameter** | 2026-09-02 → 2027-02-15 (+166d) | 2026-09-26 → 2027-03-14 (+169d) |  |  |  |
| RHD4CZ7C013IRR1101 | Excavation works for HDPE Pipline 180 mm - (RD-C-1/3)-Z7-C013-IRR | 2026-09-02 → 2027-02-15 (+166d) | 2026-09-07 → 2027-02-20 (+166d) |  |  |  |
| RHD4CZ7C013IRR1201 | Bedding works for HDPE Pipline 180 mm - (RD-C-1/3)-Z7-C013-IRR | 2026-09-08 → 2027-02-21 (+166d) | 2026-09-12 → 2027-02-25 (+166d) |  |  |  |
| RHD4CZ7C013IRR1301 | Installing for HDPE Pipline 180 mm - (RD-C-1/3)-Z7-C013-IRR | 2026-09-13 → 2027-02-27 (+167d) | 2026-09-17 → 2027-03-03 (+167d) |  |  |  |
| RHD4CZ7C013IRR1401 | Primary Test for HDPE Pipline 180 mm - (RD-C-1/3)-Z7-C013-IRR | 2026-09-19 → 2027-03-04 (+166d) | 2026-09-20 → 2027-03-06 (+167d) |  |  |  |
| RHD4CZ7C013IRR1501 | Backfilling and warning tape works for HDPE Pipline 180 mm - (RD-C-1/3)-Z7-C013-IRR | 2026-09-21 → 2027-03-07 (+167d) | 2026-09-26 → 2027-03-14 (+169d) |  |  |  |
| 7274 | **RHD4-02-002-Z7-C013-Medium Voltage Network - MV** | 2026-10-11 → 2027-04-18 (+189d) | 2026-10-31 → 2027-05-08 (+189d) |  |  |  |
| 7275 | **RHD4-02-002-C013-(MV)-Medium Voltage cable trench** | 2026-10-11 → 2027-04-18 (+189d) | 2026-10-28 → 2027-05-05 (+189d) |  |  |  |
| RHD4CZ7C013MV1100 | Excavation for Medium Voltage Trench - (RD-C-1/3)-Z7-C013-MV | 2026-10-11 → 2027-04-18 (+189d) | 2026-10-14 → 2027-04-21 (+189d) |  |  | resources Skilled labor [42.36 h]; Unskilled Labor [84.62 h]; Equipment Opreator [126.98 h]; Excavator-Poclain [42.36 h]; Dump Truck [84.62 h]; Excavation for Trench size 60cm wide and 80cm deep ( for 2 cables) [271.99 m3] → Skilled labor [42.4 h]; Unskilled Labor [84.62 h]; Equipment Opreator [126.98 h]; Excavator-Poclain [42.4 h]; Dump Truck [84.62 h]; Excavation for Trench size 60cm wide and 80cm deep ( for 2 cables) [271.99 m3] |
| RHD4CZ7C013MV1200 | Trench Backfilling for Medium Voltage Network - (RD-C-1/3)-Z7-C013-MV | 2026-10-25 → 2027-05-02 (+189d) | 2026-10-28 → 2027-05-05 (+189d) |  |  | resources Skilled labor [42.36 h]; Unskilled Labor [42.36 h]; Equipment Opreator [84.62 h]; Dump Truck [84.62 h]; Excavation for Trench size 60cm wide and 80cm deep ( for 2 cables) [116.56 m3] → Skilled labor [42.4 h]; Unskilled Labor [42.4 h]; Equipment Opreator [84.62 h]; Dump Truck [84.62 h]; Excavation for Trench size 60cm wide and 80cm deep ( for 2 cables) [116.56 m3] |
| 7277 | **RHD4-02-002-C013-(MV)-Medium Voltage cables 3Cx 500 mm²** | 2026-10-15 → 2027-04-22 (+189d) | 2026-10-31 → 2027-05-08 (+189d) |  |  |  |
| RHD4CZ7C013MV3100 | Installation of Medium Voltage Cables 3Cx 500 mm² - (RD-C-1/3)-Z7-C013-MV | 2026-10-15 → 2027-04-22 (+189d) | 2026-10-21 → 2027-04-28 (+189d) |  |  | resources Skilled labor [56.41 h]; Unskilled Labor [225.65 h]; Electrician [112.82 h]; Equipment Opreator [169.24 h]; Boom Truck [56.41 h]; Cable Laying Machine [112.82 h]; Cable 13.8 kV 3Cx 500 mm² Al/XLPE,/LLDPE / Unarmored [699.39 m] → Skilled labor [56.41 h]; Unskilled Labor [225.65 h]; Electrician [112.8 h]; Equipment Opreator [169.24 h]; Boom Truck [56.41 h]; Cable Laying Machine [112.8 h]; Cable 13.8 kV 3Cx 500 mm² Al/XLPE,/LLDPE / Unarmored [699.39 m] |
| RHD4CZ7C013MV3200 | Joints Installation of Medium Voltage Cables 3Cx 500 mm² - (RD-C-1/3)-Z7-C013-MV | 2026-10-22 → 2027-04-29 (+189d) | 2026-10-24 → 2027-05-01 (+189d) |  |  |  |
| RHD4CZ7C013MV3300 | Testing of Medium Voltage Cables 3Cx 500 mm² - (RD-C-1/3)-Z7-C013-MV | 2026-10-29 → 2027-05-06 (+189d) | 2026-10-31 → 2027-05-08 (+189d) |  |  |  |
| 7287 | **RHD4-02-002-Z7-C013-Street Lighting Network - SL** | 2027-01-06 → 2027-05-09 (+123d) | 2027-02-02 → 2027-06-09 (+127d) |  |  |  |
| 7290 | **RHD4-02-002-C013-(SL)-Street Lighting cables** | 2027-01-06 → 2027-05-09 (+123d) | 2027-01-18 → 2027-05-25 (+127d) |  |  |  |
| RHD4CZ7C013SL3100 | Excavation for Street Lighting Cables for Street Lighting Network - (RD-C-1/3)-Z7-C013-SL | 2027-01-06 → 2027-05-09 (+123d) | 2027-01-09 → 2027-05-11 (+122d) |  |  |  |
| RHD4CZ7C013SL3200 | Cable Laying of Street Lighting Cables for Street Lighting Network - (RD-C-1/3)-Z7-C013-SL | 2027-01-10 → 2027-05-12 (+122d) | 2027-01-12 → 2027-05-19 (+127d) |  |  |  |
| RHD4CZ7C013SL3300 | Warning tape and Backfill for Street Lighting Cables for Street Lighting Network - (RD-C-1/3)-Z7-C013-SL | 2027-01-13 → 2027-05-20 (+127d) | 2027-01-16 → 2027-05-23 (+127d) |  |  |  |
| RHD4CZ7C013SL3400 | Testing of Street Lighting Cables for Street Lighting Network - (RD-C-1/3)-Z7-C013-SL | 2027-01-17 → 2027-05-24 (+127d) | 2027-01-18 → 2027-05-25 (+127d) |  |  | resources Skilled labor [14.38 h]; Unskilled Labor [57.5 h]; Electrician [28.75 h]; Equipment Opreator [14.38 h]; Boom Truck [14.38 h]; Cable, Copper 4x10mm2/ CU/XLPE/SWA/PVC + 1x10mm2 CU/PVC [33 m] → Skilled labor [14.4 h]; Unskilled Labor [57.5 h]; Electrician [28.75 h]; Equipment Opreator [14.4 h]; Boom Truck [14.4 h]; Cable, Copper 4x10mm2/ CU/XLPE/SWA/PVC + 1x10mm2 CU/PVC [33 m] |
| 7291 | **RHD4-02-002-C013-(SL)-Street Lighting Poles** | 2027-01-19 → 2027-05-26 (+127d) | 2027-01-31 → 2027-06-07 (+127d) |  |  |  |
| RHD4CZ7C013SL1100 | Excavation for RC Base for Lighting Poles for Street Lighting Network - (RD-C-1/3)-Z7-C013-SL | 2027-01-19 → 2027-05-26 (+127d) | 2027-01-20 → 2027-05-27 (+127d) |  |  |  |
| RHD4CZ7C013SL1200 | Installation for RC Base for Lighting Poles for Street Lighting Network - (RD-C-1/3)-Z7-C013-SL | 2027-01-21 → 2027-05-29 (+128d) | 2027-01-23 → 2027-05-30 (+127d) |  |  |  |
| RHD4CZ7C013SL1300 | Backfill for RC Base for Lighting Poles for Street Lighting Network - (RD-C-1/3)-Z7-C013-SL | 2027-01-24 → 2027-05-31 (+127d) | 2027-01-25 → 2027-06-01 (+127d) |  |  |  |
| RHD4CZ7C013SL1400 | Installation for Lighting Poles for Street Lighting Network - (RD-C-1/3)-Z7-C013-SL | 2027-01-26 → 2027-06-02 (+127d) | 2027-01-27 → 2027-06-03 (+127d) |  |  |  |
| RHD4CZ7C013SL1500 | Luminaire Installation for Lighting Poles for Street Lighting Network - (RD-C-1/3)-Z7-C013-SL | 2027-01-28 → 2027-06-05 (+128d) | 2027-01-31 → 2027-06-07 (+127d) |  |  |  |
| 7293 | **RHD4-02-002-C013-(SL)-Street Lighting Earthing System** | 2027-02-01 → 2027-06-08 (+127d) | 2027-02-02 → 2027-06-09 (+127d) |  |  |  |
| RHD4CZ7C013SL6100 | Installation of Earthing for Lighting Poles and Fedder Pillers for Street Lighting Network - (RD-C-1/3)-Z7-C013-SL | 2027-02-01 → 2027-06-08 (+127d) | 2027-02-02 → 2027-06-09 (+127d) |  |  | resources Skilled labor [0.76 h]; Unskilled Labor [0.76 h]; Equipment Opreator [1.42 h]; Excavator-Poclain [0.76 h]; Dump Truck [0.76 h]; Including lighting poles circuits - ER [1 Unit] → Skilled labor [0.8 h]; Unskilled Labor [0.8 h]; Equipment Opreator [1.42 h]; Excavator-Poclain [0.8 h]; Dump Truck [0.8 h]; Including lighting poles circuits - ER [1 Unit] |
| 7299 | **RHD4-02-002-Z7-C013-Telecommunications Network - TC** | 2027-02-03 → 2027-06-10 (+127d) | 2027-02-15 → 2027-06-22 (+127d) |  |  |  |
| 7300 | **RHD4-02-002-C013-(TC)-Telecommunications Ducts** | 2027-02-03 → 2027-06-10 (+127d) | 2027-02-15 → 2027-06-22 (+127d) |  |  |  |
| RHD4CZ7C013TC2100 | Excavation of HDPE Ducts for Telecom Network - (RD-C-1/3)-Z7-C013-TC | 2027-02-03 → 2027-06-10 (+127d) | 2027-02-06 → 2027-06-13 (+127d) |  |  | resources Skilled labor [32.02 h]; Unskilled Labor [32.02 h]; Equipment Opreator [64.04 h]; Excavator-Poclain [32.02 h]; Dump Truck [32.02 h]; (6*50mm) HDPE ducts -TC [88.22 m] → Skilled labor [32 h]; Unskilled Labor [32 h]; Equipment Opreator [64 h]; Excavator-Poclain [32 h]; Dump Truck [32 h]; (6*50mm) HDPE ducts -TC [88.22 m] |
| RHD4CZ7C013TC2200 | Installation of HDPE Ducts for Telecom Network - (RD-C-1/3)-Z7-C013-TC | 2027-02-07 → 2027-06-14 (+127d) | 2027-02-11 → 2027-06-19 (+128d) |  |  | resources Carpenter [4.79 h]; Skilled labor [48.03 h]; Unskilled Labor [48.03 h]; Steel Fixer [4.79 h]; (6*50mm) HDPE ducts -TC [286.71 m] → Carpenter [4.8 h]; Skilled labor [48 h]; Unskilled Labor [48 h]; Steel Fixer [4.8 h]; (6*50mm) HDPE ducts -TC [286.71 m] |
| RHD4CZ7C013TC2400 | Backfilling of HDPE Ducts for Telecom Network - (RD-C-1/3)-Z7-C013-TC | 2027-02-13 → 2027-06-20 (+127d) | 2027-02-15 → 2027-06-22 (+127d) |  |  | resources Skilled labor [32.02 h]; Unskilled Labor [32.02 h]; Equipment Opreator [12.85 h]; Excavator-Poclain [12.85 h]; (6*50mm) HDPE ducts -TC [66.17 m] → Skilled labor [32 h]; Unskilled Labor [32 h]; Equipment Opreator [12.85 h]; Excavator-Poclain [12.85 h]; (6*50mm) HDPE ducts -TC [66.17 m] |
| 7301 | **RHD4-02-002-C013-(TC)-Telecommunications Manholes** | 2027-02-07 → 2027-06-14 (+127d) | 2027-02-10 → 2027-06-17 (+127d) |  |  |  |
| RHD4CZ7C013TC5100 | Excavation for Manholes for Telecom Network - (RD-C-1/3)-Z7-C013-TC | 2027-02-07 → 2027-06-14 (+127d) | 2027-02-08 → 2027-06-15 (+127d) |  |  | resources Skilled labor [4.14 h]; Unskilled Labor [4.14 h]; Equipment Opreator [3.27 h]; Excavator-Poclain [1.63 h]; Dump Truck [1.63 h]; Manhole Type 1 - TC [0.15 nr]; Manhole Type 2 - TC [0.15 nr] → Skilled labor [4.14 h]; Unskilled Labor [4.14 h]; Equipment Opreator [3.27 h]; Excavator-Poclain [1.6 h]; Dump Truck [1.6 h]; Manhole Type 1 - TC [0.15 nr]; Manhole Type 2 - TC [0.15 nr] |
| RHD4CZ7C013TC5200 | Installation of Manholes for Telecom Network - (RD-C-1/3)-Z7-C013-TC | 2027-02-09 → 2027-06-16 (+127d) | 2027-02-10 → 2027-06-17 (+127d) |  |  | resources Skilled labor [4.14 h]; Unskilled Labor [4.14 h]; Equipment Opreator [1.63 h]; Boom Truck [1.63 h]; Manhole Type 1 - TC [0.85 nr]; Manhole Type 2 - TC [0.85 nr] → Skilled labor [4.14 h]; Unskilled Labor [4.14 h]; Equipment Opreator [1.6 h]; Boom Truck [1.6 h]; Manhole Type 1 - TC [0.85 nr]; Manhole Type 2 - TC [0.85 nr] |
| 7303 | **RHD4-02-002-Z7-C013-Information and Communication Technologies - ICT** | 2027-02-16 → 2027-06-23 (+127d) | 2027-03-06 → 2027-07-17 (+133d) |  |  |  |
| 7304 | **RHD4-02-002-C013-(ICT)-Information and Communication Technologies Ducts** | 2027-02-16 → 2027-06-23 (+127d) | 2027-03-06 → 2027-07-17 (+133d) |  |  |  |
| RHD4CZ7C013ICT2100 | Excavation of HDPE Ducts for ICT Network - (RD-C-1/3)-Z7-C013-ICT | 2027-02-16 → 2027-06-23 (+127d) | 2027-02-21 → 2027-06-29 (+128d) | 5d → 6d |  |  |
| RHD4CZ7C013ICT2200 | Installation of HDPE Ducts for ICT Network - (RD-C-1/3)-Z7-C013-ICT | 2027-02-23 → 2027-06-30 (+127d) | 2027-02-28 → 2027-07-10 (+132d) | 5d → 9d |  |  |
| RHD4CZ7C013ICT2400 | Backfilling of HDPE Ducts for ICT Network - (RD-C-1/3)-Z7-C013-ICT | 2027-03-01 → 2027-07-11 (+132d) | 2027-03-06 → 2027-07-17 (+133d) | 5d → 6d |  |  |
| 7305 | **RHD4-02-002-C013-(ICT)-Information and Communication Technologies Manholes** | 2027-02-23 → 2027-06-30 (+127d) | 2027-02-27 → 2027-07-04 (+127d) |  |  |  |
| RHD4CZ7C013ICT5100 | Excavation for Manholes for ICT Network - (RD-C-1/3)-Z7-C013-ICT | 2027-02-23 → 2027-06-30 (+127d) | 2027-02-24 → 2027-07-01 (+127d) |  |  |  |
| RHD4CZ7C013ICT5200 | Installation of Manholes for ICT Network - (RD-C-1/3)-Z7-C013-ICT | 2027-02-25 → 2027-07-03 (+128d) | 2027-02-27 → 2027-07-04 (+127d) |  |  |  |
| 6568 | **RHD4-02-002-Z7-L015** | 2026-08-16 → 2026-07-05 (-42d) | 2027-11-14 → 2028-05-21 (+189d) |  |  |  |
| 6747 | **RHD4-02-002-Z7-L015-Road Works - RD** | 2026-08-27 → 2026-07-05 (-53d) | 2027-11-14 → 2028-05-21 (+189d) |  |  |  |
| 6748 | **RHD4-02-002-L015-(RD)-Subgrade** | 2026-08-27 → 2026-07-05 (-53d) | 2026-09-02 → 2026-08-03 (-30d) |  |  |  |
| RHD4CZ7L015RD1100 | Supply, lay and compaction subgrade compacted thickness 300 mm for Roads - (RD-L-15)-Z7-L015-RD(Completed) | 2026-08-27 → 2026-07-05 A (-53d) | 2026-09-02 → 2026-08-03 A (-30d) |  | 0% → 100% | resources Skilled labor [53.58 h]; Unskilled Labor [107.16 h]; Electrician [53.58 h]; Equipment Opreator [365.92 h]; Water Truck [17.64 h]; Roller compactor [26.79 h]; Grader [53.58 h]; Dump Truck [267.9 h]; Subgrade [4177.89 m3] → Skilled labor [53.6 h]; Unskilled Labor [107.2 h]; Electrician [53.6 h]; Equipment Opreator [365.92 h]; Water Truck [17.64 h]; Roller compactor [26.79 h]; Grader [53.6 h]; Dump Truck [267.9 h]; Subgrade [4177.89 m3] |
| 6749 | **RHD4-02-002-L015-(RD)-Aggregate Base Course** | 2026-09-03 → 2027-02-13 (+163d) | 2026-09-09 → 2027-02-18 (+162d) |  |  |  |
| RHD4CZ7L015RD2100 | Supply, lay and compaction Aggregate base course compacted thickness 300 mmfor Roads - (RD-L-15)-Z7-L015-RD | 2026-09-03 → 2027-02-13 (+163d) | 2026-09-09 → 2027-02-18 (+162d) |  |  |  |
| 6750 | **RHD4-02-002-L015-(RD)-Bituminous base course Two Layers, including (MC1)&(RC2)** | 2026-09-10 → 2027-02-20 (+163d) | 2027-10-07 → 2028-04-10 (+186d) |  |  |  |
| RHD4CZ7L015RD3100 | Supply, lay and Asphaltic base course including Prime Coat (MC1) for 1st Layer - (RD-L-15)-Z7-L015-RD | 2026-09-10 → 2027-02-20 (+163d) | 2026-09-12 → 2027-02-21 (+162d) |  |  |  |
| RHD4CZ7L015RD3200 | Supply, lay and Asphaltic base course including Tack Coat (RC2) for 2nd Layer - (RD-L-15)-Z7-L015-RD | 2027-10-06 → 2028-04-09 (+186d) | 2027-10-07 → 2028-04-10 (+186d) |  |  |  |
| 6752 | **RHD4-02-002-L015-(RD)-Precast Concrete Curb** | 2027-10-09 → 2028-04-11 (+185d) | 2027-10-14 → 2028-04-17 (+186d) |  |  |  |
| RHD4CZ7L015RD5100 | Supply and installation Precast Concrete Kerb for Roads - (RD-L-15)-Z7-L015-RD | 2027-10-09 → 2028-04-11 (+185d) | 2027-10-14 → 2028-04-17 (+186d) |  |  |  |
| 6755 | **RHD4-02-002-L015-(RD)-Traffic Signage** | 2027-10-16 → 2028-04-18 (+185d) | 2027-10-24 → 2028-04-26 (+185d) |  |  |  |
| RHD4CZ7L015RD8100 | Installation of Traffic Signage for Road Network - (RD-L-15)-Z7-L015-RD | 2027-10-16 → 2028-04-18 (+185d) | 2027-10-24 → 2028-04-26 (+185d) |  |  |  |
| 6753 | **RHD4-02-002-L015-(RD)-Precast Interlocking Block Pavers** | 2027-10-25 → 2028-04-27 (+185d) | 2027-11-01 → 2028-05-08 (+189d) |  |  |  |
| RHD4CZ7L015RD6100 | Interlocking block pavers for sidewalk-footpath for Side walks and Parking areas - (RD-L-15)-Z7-L015-RD | 2027-10-25 → 2028-04-27 (+185d) | 2027-11-01 → 2028-05-08 (+189d) |  |  |  |

| ID | Task | Start | Finish | Complete | Other |
| --- | --- | --- | --- | --- | --- |
| 6751 | **RHD4-02-002-L015-(RD)-Bituminous concrete wearing course including tack coat (RC2)** | 2027-11-09 → 2028-05-16 (+189d) | 2027-11-10 → 2028-05-17 (+189d) |  |  |
| RHD4CZ7L015RD4100 | Supply, lay and compaction Asphaltic wearing course including tack Coat (RC2)for Road Network - (RD-L-15)-Z7-L015-RD | 2027-11-09 → 2028-05-16 (+189d) | 2027-11-10 → 2028-05-17 (+189d) |  |  |
| 6754 | **RHD4-02-002-L015-(RD)-Pavement Marking** | 2027-11-11 → 2028-05-18 (+189d) | 2027-11-14 → 2028-05-21 (+189d) |  |  |
| RHD4CZ7L015RD7100 | Pavement Markings for Road Network - (RD-L-15)-Z7-L015-RD | 2027-11-11 → 2028-05-18 (+189d) | 2027-11-14 → 2028-05-21 (+189d) |  |  |
| 6572 | **RHD4-02-002-Z7-L015-Storm Network - ST** | 2026-08-16 → 2026-08-04 (-12d) | 2027-02-27 → 2027-06-12 (+105d) |  |  |
| 6577 | **RHD4-02-002-L015-(ST)-GRP Pipes - 800 mm diameter** | 2027-01-09 → 2026-08-15 (-147d) | 2027-02-18 → 2027-06-02 (+104d) |  |  |
| RHD4CZ7L015ST1104 | Excavation works for GRP Pipe Line 800 mm - (RD-L-15)-Z7-L015-ST | 2027-01-09 → 2026-08-15 A (-147d) | 2027-01-10 → 2026-08-16 A (-147d) | 0% → 100% |  |
| RHD4CZ7L015ST1204 | Bedding works for GRP Pipe Line 800 mm - (RD-L-15)-Z7-L015-ST | 2027-01-11 → 2026-08-18 A (-146d) | 2027-01-12 → 2026-08-19 A (-146d) | 0% → 100% |  |
| RHD4CZ7L015ST1304 | Installing for GRP Pipe Line 800 mm - (RD-L-15)-Z7-L015-ST | 2027-02-13 → 2026-08-20 A (-177d) | 2027-02-14 → 2026-08-22 A (-176d) | 0% → 100% |  |
| RHD4CZ7L015ST1504 | Backfilling and warning tape works for GRP Pipe Line 800 mm - (RD-L-15)-Z7-L015-ST | 2027-02-17 → 2026-09-19 A (-151d) | 2027-02-18 → 2027-06-02 (+104d) | 0% → 50% |  |
| RHD4CZ7L015ST1404 | Primary Test for GRP Pipe Line 800 mm - (RD-L-15)-Z7-L015-ST | 2027-02-15 → 2027-05-30 (+104d) | 2027-02-16 → 2027-05-31 (+104d) |  |  |
| 5254 | **RHD4-02-002-L015-(ST)-GRP Pipes - 900 mm diameter** |  | 2026-08-26 → 2027-02-11 (+169d) |  |  |
| RHD4CZ7L015ST1105 | Excavation works for GRP Pipe Line 900 mm - (RD-L-15)-Z7-L015-ST | 2026-08-16 A | 2026-08-17 → 2026-08-30 A (+13d) | 0% → 100% |  |
| RHD4CZ7L015ST1205 | Bedding works for GRP Pipe Line 900 mm - (RD-L-15)-Z7-L015-ST | 2026-08-18 A | 2026-08-19 → 2026-09-20 A (+32d) | 0% → 100% |  |
| RHD4CZ7L015ST1305 | Installing for GRP Pipe Line 900 mm - (RD-L-15)-Z7-L015-ST | 2026-08-20 A | 2026-08-22 → 2026-09-21 A (+30d) | 0% → 100% |  |
| RHD4CZ7L015ST1405 | Primary Test for GRP Pipe Line 900 mm - (RD-L-15)-Z7-L015-ST | 2026-08-23 → 2027-02-08 (+169d) | 2026-08-24 → 2027-02-09 (+169d) |  |  |
| RHD4CZ7L015ST1505 | Backfilling and warning tape works for GRP Pipe Line 900 mm - (RD-L-15)-Z7-L015-ST | 2026-08-25 → 2027-02-10 (+169d) | 2026-08-26 → 2027-02-11 (+169d) |  |  |
| 6008 | **RHD4-02-002-L015-(ST)-GRP Pipes - 600 mm diameter** | 2027-01-13 → 2026-08-20 (-146d) | 2027-01-30 → 2027-05-29 (+119d) |  |  |
| RHD4CZ7L015ST1102 | Excavation works for GRP Pipe Line 600 mm - (RD-L-15)-Z7-L015-ST | 2027-01-13 → 2026-08-20 A (-146d) | 2027-01-14 → 2027-05-09 (+115d) | 0% → 37% |  |
| RHD4CZ7L015ST1202 | Bedding works for GRP Pipe Line 600 mm - (RD-L-15)-Z7-L015-ST | 2027-01-16 → 2026-08-23 A (-146d) | 2027-01-17 → 2027-05-11 (+114d) | 0% → 37% |  |
| RHD4CZ7L015ST1302 | Installing for GRP Pipe Line 600 mm - (RD-L-15)-Z7-L015-ST | 2027-01-18 → 2026-08-25 A (-146d) | 2027-01-19 → 2027-05-13 (+114d) | 0% → 37% |  |
| RHD4CZ7L015ST1502 | Backfilling and warning tape works for GRP Pipe Line 600 mm - (RD-L-15)-Z7-L015-ST | 2027-01-28 → 2026-09-19 A (-131d) | 2027-01-30 → 2027-05-29 (+119d) | 0% → 37% |  |
| RHD4CZ7L015ST1402 | Primary Test for GRP Pipe Line 600 mm - (RD-L-15)-Z7-L015-ST | 2027-01-20 → 2027-05-19 (+119d) | 2027-01-21 → 2027-05-20 (+119d) |  |  |
| 6590 | **RHD4-02-002-L015-(ST)-MH Works - 1500 mm diameter** | 2027-01-19 → 2026-08-04 (-168d) | 2027-02-27 → 2027-06-12 (+105d) |  |  |
| RHD4CZ7L015ST3101 | Excavation and PC Blinding works for MH 1500 mm - (RD-L-15)-Z7-L015-ST | 2027-01-19 → 2026-08-04 A (-168d) | 2027-01-26 → 2027-05-13 (+107d) | 0% → 85% |  |
| RHD4CZ7L015ST3201 | Installation of Base for MH 1500 mm - (RD-L-15)-Z7-L015-ST | 2027-01-27 → 2026-08-29 A (-151d) | 2027-02-03 → 2027-05-20 (+106d) | 0% → 85% |  |
| RHD4CZ7L015ST3301 | MH Ring and C.Slab works and Backfilling works for MH 1500 mm - (RD-L-15)-Z7-L015-ST | 2027-02-04 → 2027-05-22 (+107d) | 2027-02-11 → 2027-05-29 (+107d) |  |  |
| RHD4CZ7L015ST3401 | Steel Cover for MH 1500 mm - (RD-L-15)-Z7-L015-ST | 2027-02-13 → 2027-05-30 (+106d) | 2027-02-17 → 2027-06-03 (+106d) |  | resources Skilled labor [47.16 h]; Unskilled Labor [94.42 h]; Equipment Opreator [9.47 h]; Boom Truck [9.47 h]; MH (1500mm Diameter) - ST - depth 1.50 - 2.5m [0.65 nr] → Skilled labor [47.16 h]; Unskilled Labor [94.4 h]; Equipment Opreator [9.47 h]; Boom Truck [9.47 h]; MH (1500mm Diameter) - ST - depth 1.50 - 2.5m [0.65 nr] |
| RHD4CZ7L015ST3501 | Finishing, Benching, Testing works for MH 1500 mm - (RD-L-15)-Z7-L015-ST | 2027-02-18 → 2027-06-05 (+107d) | 2027-02-27 → 2027-06-12 (+105d) |  | resources Skilled labor [70.79 h]; Unskilled Labor [141.57 h]; Plumber [70.79 h]; Equipment Opreator [14.16 h]; Water Truck [14.16 h]; MH (1500mm Diameter) - ST - depth 1.50 - 2.5m [1.3 nr] → Skilled labor [70.79 h]; Unskilled Labor [141.6 h]; Plumber [70.79 h]; Equipment Opreator [14.16 h]; Water Truck [14.16 h]; MH (1500mm Diameter) - ST - depth 1.50 - 2.5m [1.3 nr] |
| 6589 | **RHD4-02-002-L015-(ST)-MH Works - 1200 mm diameter** | 2027-01-27 → 2026-08-04 (-176d) | 2027-02-07 → 2027-05-29 (+111d) |  |  |
| RHD4CZ7L015ST3100 | Excavation and PC Blinding works for MH 1200 mm - (RD-L-15)-Z7-L015-ST | 2027-01-27 → 2026-08-04 A (-176d) | 2027-01-28 → 2027-05-19 (+111d) | 0% → 50% | resources Skilled labor [7.3 h]; Unskilled Labor [7.3 h]; Equipment Opreator [11.65 h]; Excavator-Poclain [7.3 h]; Water Truck [0.76 h]; Dump Truck [3.59 h]; MH (1200mm Diameter) - ST - depth 1.50 - 2.5m [0.5 nr] → Skilled labor [7.3 h]; Unskilled Labor [7.3 h]; Equipment Opreator [11.65 h]; Excavator-Poclain [7.3 h]; Water Truck [0.8 h]; Dump Truck [3.59 h]; MH (1200mm Diameter) - ST - depth 1.50 - 2.5m [0.5 nr] |
| RHD4CZ7L015ST3200 | Installation of Base for MH 1200 mm - (RD-L-15)-Z7-L015-ST | 2027-01-30 → 2026-09-12 A (-140d) | 2027-01-31 → 2027-05-22 (+111d) | 0% → 50% |  |
| RHD4CZ7L015ST3300 | MH Ring and C.Slab works and Backfilling works for MH 1200 mm - (RD-L-15)-Z7-L015-ST | 2027-02-01 → 2027-05-23 (+111d) | 2027-02-02 → 2027-05-24 (+111d) |  |  |
| RHD4CZ7L015ST3400 | Steel Cover for MH 1200 mm - (RD-L-15)-Z7-L015-ST | 2027-02-03 → 2027-05-25 (+111d) | 2027-02-04 → 2027-05-26 (+111d) |  |  |
| RHD4CZ7L015ST3500 | Finishing, Benching, Testing works for MH 1200 mm - (RD-L-15)-Z7-L015-ST | 2027-02-06 → 2027-05-27 (+110d) | 2027-02-07 → 2027-05-29 (+111d) |  |  |
| 6576 | **RHD4-02-002-L015-(ST)-GRP Pipes - 700 mm diameter** | 2027-01-11 → 2026-08-18 (-146d) | 2027-02-21 → 2027-06-05 (+104d) |  |  |
| RHD4CZ7L015ST1103 | Excavation works for GRP Pipe Line 700 mm - (RD-L-15)-Z7-L015-ST | 2027-01-11 → 2026-08-18 A (-146d) | 2027-01-12 → 2027-05-06 (+114d) | 0% → 61% |  |
| RHD4CZ7L015ST1203 | Bedding works for GRP Pipe Line 700 mm - (RD-L-15)-Z7-L015-ST | 2027-01-13 → 2026-09-15 A (-120d) | 2027-01-14 → 2027-05-09 (+115d) | 0% → 61% |  |
| RHD4CZ7L015ST1303 | Installing for GRP Pipe Line 700 mm - (RD-L-15)-Z7-L015-ST | 2027-02-13 → 2026-09-16 A (-150d) | 2027-02-14 → 2027-05-31 (+106d) | 0% → 61% |  |
| RHD4CZ7L015ST1503 | Backfilling and warning tape works for GRP Pipe Line 700 mm - (RD-L-15)-Z7-L015-ST | 2027-02-20 → 2026-09-17 A (-156d) | 2027-02-21 → 2027-06-05 (+104d) | 0% → 61% |  |
| RHD4CZ7L015ST1403 | Primary Test for GRP Pipe Line 700 mm - (RD-L-15)-Z7-L015-ST | 2027-02-15 → 2027-06-01 (+106d) | 2027-02-16 → 2027-06-02 (+106d) |  |  |
| 6587 | **RHD4-02-002-L015-(ST)-UPVC Pipes - 300 mm diameter** | 2027-01-16 → 2026-09-19 (-119d) | 2027-01-30 → 2027-05-29 (+119d) |  |  |
| RHD4CZ7L015ST2100 | Excavation works for UPVC Pipe Line 300 mm - (RD-L-15)-Z7-L015-ST | 2027-01-16 → 2026-09-19 A (-119d) | 2027-01-18 → 2027-05-12 (+114d) | 0% → 75% |  |
| RHD4CZ7L015ST2200 | Bedding works for UPVC Pipe Line 300 mm - (RD-L-15)-Z7-L015-ST | 2027-01-19 → 2027-05-13 (+114d) | 2027-01-20 → 2027-05-19 (+119d) |  |  |
| RHD4CZ7L015ST2300 | Installing for UPVC Pipe Line 300 mm - (RD-L-15)-Z7-L015-ST | 2027-01-21 → 2027-05-20 (+119d) | 2027-01-24 → 2027-05-23 (+119d) |  |  |
| RHD4CZ7L015ST2400 | Primary Test for UPVC Pipe Line 300 mm - (RD-L-15)-Z7-L015-ST | 2027-01-25 → 2027-05-24 (+119d) | 2027-01-26 → 2027-05-25 (+119d) |  |  |
| RHD4CZ7L015ST2500 | Backfilling and warning tape works for UPVC Pipe Line 300 mm - (RD-L-15)-Z7-L015-ST | 2027-01-27 → 2027-05-26 (+119d) | 2027-01-30 → 2027-05-29 (+119d) |  |  |
| 6595 | **RHD4-02-002-L015-(ST)-Concrete Encasement** | 2027-01-21 → 2027-05-20 (+119d) | 2027-01-23 → 2027-05-22 (+119d) |  |  |
| RHD4CZ7L015ST6100 | Pipe Encasement for Storm Pipelines - (RD-L-15)-Z7-L015-ST | 2027-01-21 → 2027-05-20 (+119d) | 2027-01-23 → 2027-05-22 (+119d) |  |  |
| 6596 | **RHD4-02-002-Z7-L015-Catch Basin - ST** | 2027-01-30 → 2026-09-19 (-133d) | 2027-02-20 → 2027-06-10 (+110d) |  |  |
| 6597 | **RHD4-02-002-L015-(ST)-Single Catch Basin Works** | 2027-01-30 → 2026-09-19 (-133d) | 2027-02-20 → 2027-06-10 (+110d) |  |  |
| RHD4CZ7L015ST7100 | Excavation works for Single Catch Basin - (RD-L-15)-Z7-L015-ST | 2027-01-30 → 2026-09-19 A (-133d) | 2027-02-01 → 2027-05-23 (+111d) | 0% → 70% |  |
| RHD4CZ7L015ST7200 | PC Blinding, Installation and Pipe connection for Single Catch Basin - (RD-L-15)-Z7-L015-ST | 2027-02-02 → 2026-10-27 A (-98d) | 2027-02-04 → 2027-05-26 (+111d) | 0% → 37% |  |
| RHD4CZ7L015ST7300 | Rings & C.Slab & Final Backfill for Single Catch Basin - (RD-L-15)-Z7-L015-ST | 2027-02-06 → 2026-10-29 A (-100d) | 2027-02-09 → 2027-05-31 (+111d) | 0% → 4% | resources Skilled labor [36.81 h]; Unskilled Labor [73.51 h]; Equipment Opreator [44.11 h]; Boom Truck [7.41 h]; Bobcat [36.81 h]; Single Catch basin - ST [9.45 nr] → Skilled labor [36.8 h]; Unskilled Labor [73.51 h]; Equipment Opreator [44.11 h]; Boom Truck [7.41 h]; Bobcat [36.8 h]; Single Catch basin - ST [9.45 nr] |
| RHD4CZ7L015ST7400 | Steel Cover for Single Catch Basin - (RD-L-15)-Z7-L015-ST | 2027-02-10 → 2027-06-01 (+111d) | 2027-02-13 → 2027-06-03 (+110d) |  |  |
| RHD4CZ7L015ST7500 | Finishing and Insulation works for Single Catch Basin - (RD-L-15)-Z7-L015-ST | 2027-02-14 → 2027-06-05 (+111d) | 2027-02-20 → 2027-06-10 (+110d) |  | resources Skilled labor [58.81 h]; Unskilled Labor [117.62 h]; Equipment Opreator [11.76 h]; Boom Truck [11.76 h]; Single Catch basin - ST [4.05 nr] → Skilled labor [58.81 h]; Unskilled Labor [117.6 h]; Equipment Opreator [11.76 h]; Boom Truck [11.76 h]; Single Catch basin - ST [4.05 nr] |
| 6621 | **RHD4-02-002-Z7-L015-Sewage Network - SW** | 2027-02-23 → 2026-08-09 (-198d) | 2027-05-05 → 2027-07-18 (+74d) |  |  |
| 6627 | **RHD4-02-002-L015-(SW)-UPVC Pipes - 200 mm diameter** | 2027-02-23 → 2026-08-12 (-195d) | 2027-03-22 → 2027-06-14 (+84d) |  |  |
| RHD4CZ7L015SW2100 | Excavation works for UPVC Pipe Line 200 mm - (RD-L-15)-Z7-L015-SW | 2027-02-23 → 2026-08-12 A (-195d) | 2027-02-27 → 2026-09-15 A (-165d) | 0% → 100% |  |
| RHD4CZ7L015SW2200 | Bedding works for UPVC Pipe Line 200 mm - (RD-L-15)-Z7-L015-SW | 2027-02-28 → 2026-08-13 A (-199d) | 2027-03-03 → 2026-09-16 A (-168d) | 0% → 100% |  |
| RHD4CZ7L015SW2300 | Installing for UPVC Pipe Line 200 mm - (RD-L-15)-Z7-L015-SW | 2027-03-04 → 2026-08-15 A (-201d) | 2027-03-13 → 2026-09-17 A (-177d) | 0% → 100% |  |
| RHD4CZ7L015SW2500 | Backfilling and warning tape works for UPVC Pipe Line 200 mm - (RD-L-15)-Z7-L015-SW | 2027-03-17 → 2026-10-27 A (-141d) | 2027-03-22 → 2026-11-01 A (-141d) | 0% → 100% |  |
| RHD4CZ7L015SW2400 | Primary Test for UPVC Pipe Line 200 mm - (RD-L-15)-Z7-L015-SW | 2027-03-14 → 2026-10-31 A (-134d) | 2027-03-16 → 2027-06-14 (+90d) | 0% → 21% |  |
| 6631 | **RHD4-02-002-L015-(SW)-MH Works - 1200 mm diameter** | 2027-02-28 → 2026-08-09 (-203d) | 2027-05-05 → 2027-07-18 (+74d) |  |  |
| RHD4CZ7L015SW3100 | Excavation and PC Blinding works for MH 1200 mm - (RD-L-15)-Z7-L015-SW | 2027-02-28 → 2026-08-09 A (-203d) | 2027-03-15 → 2026-09-22 A (-174d) | 0% → 100% |  |
| RHD4CZ7L015SW3200 | Installation of Base for MH 1200 mm - (RD-L-15)-Z7-L015-SW | 2027-03-16 → 2026-08-10 A (-218d) | 2027-03-29 → 2026-10-20 A (-160d) | 0% → 100% |  |
| RHD4CZ7L015SW3300 | MH Ring and C.Slab works and Backfilling works for MH 1200 mm - (RD-L-15)-Z7-L015-SW | 2027-03-30 → 2027-06-12 (+74d) | 2027-04-12 → 2027-06-24 (+73d) |  | resources Skilled labor [125.24 h]; Unskilled Labor [125.24 h]; Equipment Opreator [87.67 h]; Boom Truck [50.1 h]; Concrete Mixer Truck [37.57 h]; MH (1200mm Diameter) - SW - depth 0 - 1.5m [2.1 nr]; MH (1200mm Diameter) - SW - depth 1.51 - 2.5m [5.95 nr] → Skilled labor [125.24 h]; Unskilled Labor [125.24 h]; Equipment Opreator [87.67 h]; Boom Truck [50.1 h]; Concrete Mixer Truck [37.6 h]; MH (1200mm Diameter) - SW - depth 0 - 1.5m [2.1 nr]; MH (1200mm Diameter) - SW - depth 1.51 - 2.5m [5.95 nr] |
| RHD4CZ7L015SW3400 | Steel Cover for MH 1200 mm - (RD-L-15)-Z7-L015-SW | 2027-04-13 → 2027-06-26 (+74d) | 2027-04-21 → 2027-07-04 (+74d) |  |  |
| RHD4CZ7L015SW3500 | Finishing, Benching, Testing works for MH 1200 mm - (RD-L-15)-Z7-L015-SW | 2027-04-22 → 2027-07-05 (+74d) | 2027-05-05 → 2027-07-18 (+74d) |  |  |
| 6658 | **RHD4-02-002-Z7-L015-Potable Network - PT** | 2027-03-17 → 2027-06-15 (+90d) | 2027-05-26 → 2027-10-07 (+134d) |  |  |

| ID | Task | Start | Finish | Duration | Other |
| --- | --- | --- | --- | --- | --- |
| 6659 | **RHD4-02-002-L015-(PT)-HDPE Pipes - 110 mm diameter** | 2027-03-22 → 2027-06-20 (+90d) | 2027-04-15 → 2027-09-05 (+143d) |  |  |
| RHD4CZ7L015PT1100 | Excavation works for HDPE Pipline 110 mm - (RD-L-15)-Z7-L015-PT | 2027-03-22 → 2027-06-20 (+90d) | 2027-03-23 → 2027-06-21 (+90d) |  | resources Skilled labor [1.42 h]; Unskilled Labor [1.42 h]; Equipment Opreator [1.63 h]; Excavator-Poclain [1.42 h]; Dump Truck [0.33 h]; HDPE (110mm Diameter) - PT - Depth: less than 1.5m [3.14 m] → Skilled labor [1.42 h]; Unskilled Labor [1.42 h]; Equipment Opreator [1.6 h]; Excavator-Poclain [1.42 h]; Dump Truck [0.33 h]; HDPE (110mm Diameter) - PT - Depth: less than 1.5m [3.14 m] |
| RHD4CZ7L015PT1200 | Bedding works for HDPE Pipline 110 mm - (RD-L-15)-Z7-L015-PT | 2027-03-25 → 2027-06-23 (+90d) | 2027-03-27 → 2027-06-24 (+89d) |  |  |
| RHD4CZ7L015PT1300 | Installing for HDPE Pipline 110 mm - (RD-L-15)-Z7-L015-PT | 2027-04-01 → 2027-06-30 (+90d) | 2027-04-03 → 2027-07-01 (+89d) |  |  |
| RHD4CZ7L015PT1400 | Primary Test for HDPE Pipline 110 mm - (RD-L-15)-Z7-L015-PT | 2027-04-10 → 2027-08-30 (+142d) | 2027-04-11 → 2027-08-31 (+142d) |  |  |
| RHD4CZ7L015PT1500 | Backfilling and warning tape works for HDPE Pipline 110 mm - (RD-L-15)-Z7-L015-PT | 2027-04-14 → 2027-09-04 (+143d) | 2027-04-15 → 2027-09-05 (+143d) |  |  |
| 6660 | **RHD4-02-002-L015-(PT)-HDPE Pipes - 160 mm diameter** | 2027-03-17 → 2027-06-15 (+90d) | 2027-04-13 → 2027-09-02 (+142d) |  |  |
| RHD4CZ7L015PT1101 | Excavation works for HDPE Pipline 160 mm - (RD-L-15)-Z7-L015-PT | 2027-03-17 → 2027-06-15 (+90d) | 2027-03-21 → 2027-06-19 (+90d) |  |  |
| RHD4CZ7L015PT1201 | Bedding works for HDPE Pipline 160 mm - (RD-L-15)-Z7-L015-PT | 2027-03-22 → 2027-06-20 (+90d) | 2027-03-24 → 2027-06-22 (+90d) |  |  |
| RHD4CZ7L015PT1301 | Installing for HDPE Pipline 160 mm - (RD-L-15)-Z7-L015-PT | 2027-03-25 → 2027-06-23 (+90d) | 2027-03-31 → 2027-06-29 (+90d) |  |  |
| RHD4CZ7L015PT1401 | Primary Test for HDPE Pipline 160 mm - (RD-L-15)-Z7-L015-PT | 2027-04-07 → 2027-08-28 (+143d) | 2027-04-08 → 2027-08-29 (+143d) |  |  |
| RHD4CZ7L015PT1501 | Backfilling and warning tape works for HDPE Pipline 160 mm - (RD-L-15)-Z7-L015-PT | 2027-04-10 → 2027-08-30 (+142d) | 2027-04-13 → 2027-09-02 (+142d) |  |  |
| 6664 | **RHD4-02-002-L015-(PT)-Gate Valves (Direct Buried)** | 2027-04-01 → 2027-06-30 (+90d) | 2027-04-18 → 2027-09-07 (+142d) |  |  |
| RHD4CZ7L015PT3100 | Installation for Direct Buried Gate Valves - (RD-L-15)-Z7-L015-PT | 2027-04-01 → 2027-06-30 (+90d) | 2027-04-03 → 2027-07-01 (+89d) |  |  |
| RHD4CZ7L015PT3200 | Stem and Service box for Direct Buried Gate Valves - (RD-L-15)-Z7-L015-PT | 2027-04-17 → 2027-09-06 (+142d) | 2027-04-18 → 2027-09-07 (+142d) |  |  |
| 6667 | **RHD4-02-002-L015-(PT)-Wash out Valve Chambers** | 2027-04-14 → 2027-09-04 (+143d) | 2027-04-22 → 2027-09-12 (+143d) |  |  |
| RHD4CZ7L015PT2101 | Excavation and Bedding for Wash out Valve Chambers for Potable Water Network - (RD-L-15)-Z7-L015-PT | 2027-04-14 → 2027-09-04 (+143d) | 2027-04-15 → 2027-09-05 (+143d) |  |  |
| RHD4CZ7L015PT2201 | PC works for Wash out Valve Chambers for Potable Water Network - (RD-L-15)-Z7-L015-PT | 2027-04-17 → 2027-09-06 (+142d) | 2027-04-18 → 2027-09-07 (+142d) |  |  |
| RHD4CZ7L015PT2301 | Installation for Wash out Valve Chambers for Potable Water Network - (RD-L-15)-Z7-L015-PT | 2027-04-19 → 2027-09-08 (+142d) | 2027-04-20 → 2027-09-09 (+142d) |  |  |
| RHD4CZ7L015PT2401 | Backfilling works for Wash out Valve Chambers for Potable Water Network - (RD-L-15)-Z7-L015-PT | 2027-04-21 → 2027-09-11 (+143d) | 2027-04-22 → 2027-09-12 (+143d) |  |  |
| 6668 | **RHD4-02-002-L015-(PT)-Wash out Valves** | 2027-04-21 → 2027-09-11 (+143d) | 2027-04-25 → 2027-09-14 (+142d) |  |  |
| RHD4CZ7L015PT3102 | Installation for Wash out Valves for Potable Water Network - (RD-L-15)-Z7-L015-PT | 2027-04-21 → 2027-09-11 (+143d) | 2027-04-22 → 2027-09-12 (+143d) |  |  |
| RHD4CZ7L015PT3202 | Stem and Service box for Wash out Valves for Potable Water Network - (RD-L-15)-Z7-L015-PT | 2027-04-24 → 2027-09-13 (+142d) | 2027-04-25 → 2027-09-14 (+142d) |  |  |
| 6671 | **RHD4-02-002-L015-(PT)-Fire Hydrant** | 2027-04-26 → 2027-09-15 (+142d) | 2027-05-26 → 2027-10-07 (+134d) |  |  |
| RHD4CZ7L015PT4100 | Excavation and Bedding and Pipe Installation for Fire Hydrant - (RD-L-15)-Z7-L015-PT | 2027-04-26 → 2027-09-15 (+142d) | 2027-05-01 → 2027-09-20 (+142d) |  | resources Skilled labor [54.45 h]; Unskilled Labor [54.45 h]; Plumber [54.45 h]; Equipment Opreator [27.23 h]; Excavator-Poclain [27.23 h]; 3-outlet fire hydrant (2 x 2.5 inch and 1 x 4.5 inch) in the form of a separate dry vacuum cylinder [1 nr] → Skilled labor [54.45 h]; Unskilled Labor [54.45 h]; Plumber [54.45 h]; Equipment Opreator [27.2 h]; Excavator-Poclain [27.2 h]; 3-outlet fire hydrant (2 x 2.5 inch and 1 x 4.5 inch) in the form of a separate dry vacuum cylinder [1 nr] |
| RHD4CZ7L015PT4200 | Valve Installation for Fire Hydrant - (RD-L-15)-Z7-L015-PT | 2027-05-02 → 2027-09-21 (+142d) | 2027-05-05 → 2027-09-26 (+144d) |  |  |
| RHD4CZ7L015PT4300 | Stem for Fire Hydrant - (RD-L-15)-Z7-L015-PT | 2027-05-06 → 2027-09-27 (+144d) | 2027-05-12 → 2027-09-30 (+141d) | 6d → 4d |  |
| RHD4CZ7L015PT4400 | Fire Installation for Fire Hydrant - (RD-L-15)-Z7-L015-PT | 2027-05-13 → 2027-10-02 (+142d) | 2027-05-24 → 2027-10-05 (+134d) | 6d → 4d |  |
| RHD4CZ7L015PT4500 | Protection Barriers for Fire Hydrant - (RD-L-15)-Z7-L015-PT | 2027-05-25 → 2027-10-06 (+134d) | 2027-05-26 → 2027-10-07 (+134d) |  |  |
| 6672 | **RHD4-02-002-L015-(PT)-Concrete Encasement** | 2027-04-01 → 2027-06-30 (+90d) | 2027-04-06 → 2027-07-05 (+90d) |  |  |
| RHD4CZ7L015PT5100 | Pipe Encasement for Potable Pipelines - (RD-L-15)-Z7-L015-PT | 2027-04-01 → 2027-06-30 (+90d) | 2027-04-06 → 2027-07-05 (+90d) |  |  |
| 6673 | **RHD4-02-002-Z7-L015-Irrigation Network - IRR** | 2027-03-24 → 2027-06-22 (+90d) | 2027-05-02 → 2027-11-16 (+198d) |  |  |
| 6674 | **RHD4-02-002-L015-(IRR)-HDPE Pipes - 160 mm diameter** | 2027-03-24 → 2027-06-22 (+90d) | 2027-04-20 → 2027-07-19 (+90d) |  |  |
| RHD4CZ7L015IRR1100 | Excavation works for HDPE Pipline 160 mm - (RD-L-15)-Z7-L015-IRR | 2027-03-24 → 2027-06-22 (+90d) | 2027-03-30 → 2027-06-28 (+90d) |  |  |
| RHD4CZ7L015IRR1200 | Bedding works for HDPE Pipline 160 mm - (RD-L-15)-Z7-L015-IRR | 2027-03-31 → 2027-06-29 (+90d) | 2027-04-05 → 2027-07-04 (+90d) |  |  |
| RHD4CZ7L015IRR1300 | Installing for HDPE Pipline 160 mm - (RD-L-15)-Z7-L015-IRR | 2027-04-06 → 2027-07-05 (+90d) | 2027-04-12 → 2027-07-11 (+90d) |  |  |
| RHD4CZ7L015IRR1400 | Primary Test for HDPE Pipline 160 mm - (RD-L-15)-Z7-L015-IRR | 2027-04-13 → 2027-07-12 (+90d) | 2027-04-14 → 2027-07-13 (+90d) |  |  |
| RHD4CZ7L015IRR1500 | Backfilling and warning tape works for HDPE Pipline 160 mm - (RD-L-15)-Z7-L015-IRR | 2027-04-15 → 2027-07-14 (+90d) | 2027-04-20 → 2027-07-19 (+90d) |  |  |
| 6682 | **RHD4-02-002-L015-(IRR)-Gate Valves (Direct Buried)** | 2027-04-11 → 2027-07-10 (+90d) | 2027-04-22 → 2027-07-21 (+90d) |  |  |
| RHD4CZ7L015IRR3100 | Installation for Direct Buried Gate Valves - (RD-L-15)-Z7-L015-IRR | 2027-04-11 → 2027-07-10 (+90d) | 2027-04-12 → 2027-07-11 (+90d) |  |  |
| RHD4CZ7L015IRR3200 | Stem and Service box for Direct Buried Gate Valves - (RD-L-15)-Z7-L015-IRR | 2027-04-21 → 2027-07-20 (+90d) | 2027-04-22 → 2027-07-21 (+90d) |  |  |
| 6685 | **RHD4-02-002-L015-(IRR)-Wash out Chamber** | 2027-04-21 → 2027-07-20 (+90d) | 2027-04-29 → 2027-07-28 (+90d) |  |  |
| RHD4CZ7L015IRR2101 | Excavation and Bedding for Wash out Chamber for Irrigation Network - (RD-L-15)-Z7-L015-IRR | 2027-04-21 → 2027-07-20 (+90d) | 2027-04-22 → 2027-07-21 (+90d) |  |  |
| RHD4CZ7L015IRR2201 | PC works for Wash out Chamber for Irrigation Network - (RD-L-15)-Z7-L015-IRR | 2027-04-24 → 2027-07-22 (+89d) | 2027-04-25 → 2027-07-24 (+90d) |  |  |
| RHD4CZ7L015IRR2301 | Installation for Wash out Chamber for Irrigation Network - (RD-L-15)-Z7-L015-IRR | 2027-04-26 → 2027-07-25 (+90d) | 2027-04-27 → 2027-07-26 (+90d) |  |  |
| RHD4CZ7L015IRR2401 | Backfilling works for Wash out Chamber for Irrigation Network - (RD-L-15)-Z7-L015-IRR | 2027-04-28 → 2027-07-27 (+90d) | 2027-04-29 → 2027-07-28 (+90d) |  |  |
| 6686 | **RHD4-02-002-L015-(IRR)-Wash out Valves** | 2027-04-28 → 2027-11-13 (+199d) | 2027-05-02 → 2027-11-16 (+198d) |  |  |
| RHD4CZ7L015IRR3102 | Installation for Wash out Valve for Irrigation Network - (RD-L-15)-Z7-L015-IRR | 2027-04-28 → 2027-11-13 (+199d) | 2027-04-29 → 2027-11-14 (+199d) |  |  |
| RHD4CZ7L015IRR3202 | Stem and Service box for Wash out Valve for Irrigation Network - (RD-L-15)-Z7-L015-IRR | 2027-05-01 → 2027-11-15 (+198d) | 2027-05-02 → 2027-11-16 (+198d) |  |  |
| 6687 | **RHD4-02-002-L015-(IRR)-Air Valve Chamber** | 2027-04-21 → 2027-07-20 (+90d) | 2027-04-29 → 2027-07-28 (+90d) |  |  |
| RHD4CZ7L015IRR2102 | Excavation and Bedding for Valve Chamber for Irrigation Network - (RD-L-15)-Z7-L015-IRR | 2027-04-21 → 2027-07-20 (+90d) | 2027-04-22 → 2027-07-21 (+90d) |  |  |
| RHD4CZ7L015IRR2202 | PC works for Valve Chamber for Irrigation Network - (RD-L-15)-Z7-L015-IRR | 2027-04-24 → 2027-07-22 (+89d) | 2027-04-25 → 2027-07-24 (+90d) |  |  |
| RHD4CZ7L015IRR2302 | Installation for Valve Chamber for Irrigation Network - (RD-L-15)-Z7-L015-IRR | 2027-04-26 → 2027-07-25 (+90d) | 2027-04-27 → 2027-07-26 (+90d) |  |  |
| RHD4CZ7L015IRR2402 | Backfilling works for Valve Chamber for Irrigation Network - (RD-L-15)-Z7-L015-IRR | 2027-04-28 → 2027-07-27 (+90d) | 2027-04-29 → 2027-07-28 (+90d) |  |  |
| 6688 | **RHD4-02-002-L015-(IRR)-Air Valves** | 2027-04-28 → 2027-07-27 (+90d) | 2027-05-02 → 2027-09-09 (+130d) |  |  |
| RHD4CZ7L015IRR3103 | Installation for Air Valves for Irrigation Network - (RD-L-15)-Z7-L015-IRR | 2027-04-28 → 2027-07-27 (+90d) | 2027-04-29 → 2027-07-28 (+90d) |  |  |
| RHD4CZ7L015IRR3203 | Stem and Service box for Air Valves for Irrigation Network - (RD-L-15)-Z7-L015-IRR | 2027-05-01 → 2027-09-08 (+130d) | 2027-05-02 → 2027-09-09 (+130d) |  |  |
| 6707 | **RHD4-02-002-Z7-L015-Medium Voltage Network - MV** | 2026-09-13 → 2027-02-23 (+163d) | 2026-10-25 → 2027-04-17 (+174d) |  |  |
| 6708 | **RHD4-02-002-L015-(MV)-Medium Voltage cable trench** | 2026-09-13 → 2027-02-23 (+163d) | 2026-10-21 → 2027-04-13 (+174d) |  |  |
| RHD4CZ7L015MV1100 | Excavation for Medium Voltage Trench - (RD-L-15)-Z7-L015-MV | 2026-09-13 → 2027-02-23 (+163d) | 2026-09-29 → 2027-03-14 (+166d) |  | resources Skilled labor [148.76 h]; Unskilled Labor [297.52 h]; Equipment Opreator [446.29 h]; Excavator-Poclain [148.76 h]; Dump Truck [297.52 h]; Excavation for Trench size 40cm wide and 80cm deep ( for 1 cables) [934.49 m3]; Excavation for Trench size 60cm wide and 80cm deep ( for 2 cables) [21.77 m3] → Skilled labor [148.8 h]; Unskilled Labor [297.52 h]; Equipment Opreator [446.29 h]; Excavator-Poclain [148.8 h]; Dump Truck [297.52 h]; Excavation for Trench size 40cm wide and 80cm deep ( for 1 cables) [934.49 m3]; Excavation for Trench size 60cm wide and 80cm deep ( for 2 cables) [21.77 m3] |
| RHD4CZ7L015MV1200 | Trench Backfilling for Medium Voltage Network - (RD-L-15)-Z7-L015-MV | 2026-10-06 → 2027-03-29 (+174d) | 2026-10-21 → 2027-04-13 (+174d) |  | resources Skilled labor [148.76 h]; Unskilled Labor [148.76 h]; Equipment Opreator [297.52 h]; Dump Truck [297.52 h]; Excavation for Trench size 40cm wide and 80cm deep ( for 1 cables) [400.5 m3]; Excavation for Trench size 60cm wide and 80cm deep ( for 2 cables) [9.33 m3] → Skilled labor [148.8 h]; Unskilled Labor [148.8 h]; Equipment Opreator [297.52 h]; Dump Truck [297.52 h]; Excavation for Trench size 40cm wide and 80cm deep ( for 1 cables) [400.5 m3]; Excavation for Trench size 60cm wide and 80cm deep ( for 2 cables) [9.33 m3] |
| 6709 | **RHD4-02-002-L015-(MV)-Medium Voltage duct banks** | 2026-09-13 → 2027-02-23 (+163d) | 2026-09-27 → 2027-03-08 (+162d) |  |  |
| RHD4CZ7L015MV2100 | Excavation of Duct Banks for Medium Voltage Network - (RD-L-15)-Z7-L015-MV | 2026-09-13 → 2027-02-23 (+163d) | 2026-09-15 → 2027-02-25 (+163d) |  | resources Unskilled Labor [24.39 h]; Equipment Opreator [48.79 h]; Excavator-Poclain [24.39 h]; Dump Truck [24.39 h]; Duct bank for MV cables UPVC (2xø150mm) [3.36 m] → Unskilled Labor [24.39 h]; Equipment Opreator [48.8 h]; Excavator-Poclain [24.39 h]; Dump Truck [24.39 h]; Duct bank for MV cables UPVC (2xø150mm) [3.36 m] |
| RHD4CZ7L015MV2200 | Installation of Duct Banks for Medium Voltage Network - (RD-L-15)-Z7-L015-MV | 2026-09-16 → 2027-02-27 (+164d) | 2026-09-20 → 2027-03-02 (+163d) |  |  |
| RHD4CZ7L015MV2300 | Pouring of Duct Banks for Medium Voltage Network - (RD-L-15)-Z7-L015-MV | 2026-09-21 → 2027-03-03 (+163d) | 2026-09-24 → 2027-03-06 (+163d) |  | resources Unskilled Labor [24.39 h]; Equipment Opreator [48.79 h]; Excavator-Poclain [24.39 h]; Dump Truck [24.39 h]; Duct bank for MV cables UPVC (2xø150mm) [21.85 m] → Unskilled Labor [24.39 h]; Equipment Opreator [48.8 h]; Excavator-Poclain [24.39 h]; Dump Truck [24.39 h]; Duct bank for MV cables UPVC (2xø150mm) [21.85 m] |
| RHD4CZ7L015MV2400 | Backfilling of Duct Banks for Medium Voltage Network - (RD-L-15)-Z7-L015-MV | 2026-09-26 → 2027-03-07 (+162d) | 2026-09-27 → 2027-03-08 (+162d) |  |  |
| 6710 | **RHD4-02-002-L015-(MV)-Medium Voltage cables 3Cx 500 mm²** | 2026-09-30 → 2027-03-15 (+166d) | 2026-10-25 → 2027-04-17 (+174d) |  |  |
| RHD4CZ7L015MV3100 | Installation of Medium Voltage Cables 3Cx 500 mm² - (RD-L-15)-Z7-L015-MV | 2026-09-30 → 2027-03-15 (+166d) | 2026-10-03 → 2027-03-25 (+173d) | 3d → 10d |  |
| RHD4CZ7L015MV3200 | Joints Installation of Medium Voltage Cables 3Cx 500 mm² - (RD-L-15)-Z7-L015-MV | 2026-10-04 → 2027-03-27 (+174d) | 2026-10-05 → 2027-03-28 (+174d) |  |  |
| RHD4CZ7L015MV3300 | Testing of Medium Voltage Cables 3Cx 500 mm² - (RD-L-15)-Z7-L015-MV | 2026-10-22 → 2027-04-14 (+174d) | 2026-10-25 → 2027-04-17 (+174d) |  | resources Skilled labor [32.24 h]; Unskilled Labor [128.83 h]; Electrician [64.47 h]; Cable 13.8 kV 3Cx 500 mm² Al/XLPE,/LLDPE / Unarmored [147.88 m] → Skilled labor [32.24 h]; Unskilled Labor [128.8 h]; Electrician [64.47 h]; Cable 13.8 kV 3Cx 500 mm² Al/XLPE,/LLDPE / Unarmored [147.88 m] |

| ID | Task | Start | Finish | Duration | Other |
| --- | --- | --- | --- | --- | --- |
| 6714 | **RHD4-02-002-Z7-L015-Low Voltage Network - LV** | 2027-05-03 → 2027-09-11 (+131d) | 2027-05-20 → 2027-11-18 (+182d) |  |  |
| 4257 | **RHD4-02-002-L015-(LV)-Low Voltage Drawpit** | 2027-05-03 → 2027-09-11 (+131d) | 2027-05-06 → 2027-09-14 (+131d) |  |  |
| RHD4CZ7L015LV5100 | Excavation of Drawpit size 900x900x1000mm for Low Voltage Network - (RD-L-15)-Z7-L015-LV | 2027-05-03 → 2027-09-11 (+131d) | 2027-05-04 → 2027-09-12 (+131d) |  | resources Skilled labor [1.85 h]; Unskilled Labor [1.85 h]; Equipment Opreator [1.42 h]; Excavator-Poclain [0.76 h]; Dump Truck [0.76 h]; Drawpit with medium duty steel cover, size900x900x1000mm, [0.3 Unit] → Skilled labor [1.85 h]; Unskilled Labor [1.85 h]; Equipment Opreator [1.42 h]; Excavator-Poclain [0.8 h]; Dump Truck [0.8 h]; Drawpit with medium duty steel cover, size900x900x1000mm, [0.3 Unit] |
| RHD4CZ7L015LV5200 | Installation of Drawpit size 900x900x1000mm for Low Voltage Network - (RD-L-15)-Z7-L015-LV | 2027-05-05 → 2027-09-13 (+131d) | 2027-05-06 → 2027-09-14 (+131d) |  | resources Skilled labor [1.85 h]; Unskilled Labor [1.85 h]; Equipment Opreator [0.76 h]; Boom Truck [0.76 h]; Drawpit with medium duty steel cover, size900x900x1000mm, [1.7 Unit] → Skilled labor [1.85 h]; Unskilled Labor [1.85 h]; Equipment Opreator [0.8 h]; Boom Truck [0.8 h]; Drawpit with medium duty steel cover, size900x900x1000mm, [1.7 Unit] |
| 4258 | **RHD4-02-002-L015-(LV)-Low Voltage cables** | 2027-05-08 → 2027-09-15 (+130d) | 2027-05-20 → 2027-11-18 (+182d) |  |  |
| RHD4CZ7L015LV3100 | Excavation for Low Voltage Cables for Low Voltage Network - (RD-L-15)-Z7-L015-LV | 2027-05-08 → 2027-09-15 (+130d) | 2027-05-09 → 2027-09-16 (+130d) |  | resources Skilled labor [16.77 h]; Unskilled Labor [33.54 h]; Equipment Opreator [33.54 h]; Excavator-Poclain [16.77 h]; Boom Truck [16.77 h]; Cable, Copper 4x50mm2/ CU/XLPE/PVC +1x25mm2 CU/PVC [77.03 m] → Skilled labor [16.8 h]; Unskilled Labor [33.54 h]; Equipment Opreator [33.54 h]; Excavator-Poclain [16.8 h]; Boom Truck [16.8 h]; Cable, Copper 4x50mm2/ CU/XLPE/PVC +1x25mm2 CU/PVC [77.03 m] |
| RHD4CZ7L015LV3200 | Cable Laying of Low Voltage Cables for Low Voltage Network - (RD-L-15)-Z7-L015-LV | 2027-05-10 → 2027-09-18 (+131d) | 2027-05-11 → 2027-09-19 (+131d) |  | resources Skilled labor [13.94 h]; Unskilled Labor [55.98 h]; Electrician [27.99 h]; Equipment Opreator [41.93 h]; Boom Truck [13.94 h]; Cable Laying Machine [27.99 h]; Cable, Copper 4x50mm2/ CU/XLPE/PVC +1x25mm2 CU/PVC [231.1 m] → Skilled labor [13.94 h]; Unskilled Labor [56 h]; Electrician [28 h]; Equipment Opreator [41.93 h]; Boom Truck [13.94 h]; Cable Laying Machine [28 h]; Cable, Copper 4x50mm2/ CU/XLPE/PVC +1x25mm2 CU/PVC [231.1 m] |
| RHD4CZ7L015LV3300 | Warning tape and Backfill for Low Voltage Cables for Low Voltage Network - (RD-L-15)-Z7-L015-LV | 2027-05-12 → 2027-09-20 (+131d) | 2027-05-13 → 2027-09-21 (+131d) |  | resources Skilled labor [13.94 h]; Unskilled Labor [55.98 h]; Electrician [27.99 h]; Equipment Opreator [13.94 h]; Boom Truck [13.94 h]; Cable, Copper 4x50mm2/ CU/XLPE/PVC +1x25mm2 CU/PVC [57.78 m] → Skilled labor [13.94 h]; Unskilled Labor [56 h]; Electrician [28 h]; Equipment Opreator [13.94 h]; Boom Truck [13.94 h]; Cable, Copper 4x50mm2/ CU/XLPE/PVC +1x25mm2 CU/PVC [57.78 m] |
| RHD4CZ7L015LV3400 | Testing of Low Voltage Cables for Low Voltage Network - (RD-L-15)-Z7-L015-LV | 2027-05-19 → 2027-11-17 (+182d) | 2027-05-20 → 2027-11-18 (+182d) |  | resources Skilled labor [8.39 h]; Unskilled Labor [33.54 h]; Electrician [16.77 h]; Equipment Opreator [8.39 h]; Boom Truck [8.39 h]; Cable, Copper 4x50mm2/ CU/XLPE/PVC +1x25mm2 CU/PVC [19.26 m] → Skilled labor [8.39 h]; Unskilled Labor [33.54 h]; Electrician [16.8 h]; Equipment Opreator [8.39 h]; Boom Truck [8.39 h]; Cable, Copper 4x50mm2/ CU/XLPE/PVC +1x25mm2 CU/PVC [19.26 m] |
| 6720 | **RHD4-02-002-Z7-L015-Street Lighting Network - SL** | 2026-09-16 → 2027-02-27 (+164d) | 2027-07-13 → 2028-01-11 (+182d) |  |  |
| 6721 | **RHD4-02-002-L015-(SL)-Street Lighting duct banks** | 2026-09-16 → 2027-02-27 (+164d) | 2026-09-30 → 2027-03-15 (+166d) |  |  |
| RHD4CZ7L015SL2100 | Excavation of Duct Banks for Street Lighting Network - (RD-L-15)-Z7-L015-SL | 2026-09-16 → 2027-02-27 (+164d) | 2026-09-19 → 2027-03-01 (+163d) |  | resources Skilled labor [24.83 h]; Unskilled Labor [24.83 h]; Equipment Opreator [49.55 h]; Excavator-Poclain [24.83 h]; Dump Truck [24.83 h]; Road Crossing Duct for Street Lighting cables UPVC (2x?110mm) [3.41 m] → Skilled labor [24.8 h]; Unskilled Labor [24.8 h]; Equipment Opreator [49.55 h]; Excavator-Poclain [24.8 h]; Dump Truck [24.8 h]; Road Crossing Duct for Street Lighting cables UPVC (2x?110mm) [3.41 m] |
| RHD4CZ7L015SL2200 | Installation of Duct Banks for Street Lighting Network - (RD-L-15)-Z7-L015-SL | 2026-09-20 → 2027-03-02 (+163d) | 2026-09-24 → 2027-03-06 (+163d) |  |  |
| RHD4CZ7L015SL2300 | Pouring of Duct Banks for Street Lighting Network - (RD-L-15)-Z7-L015-SL | 2026-09-26 → 2027-03-07 (+162d) | 2026-09-28 → 2027-03-13 (+166d) |  | resources Skilled labor [24.83 h]; Unskilled Labor [24.83 h]; Equipment Opreator [9.91 h]; Concrete Mixer Truck [5.01 h]; Concrete Pump [5.01 h]; Road Crossing Duct for Street Lighting cables UPVC (2x?110mm) [22.19 m] → Skilled labor [24.8 h]; Unskilled Labor [24.8 h]; Equipment Opreator [9.91 h]; Concrete Mixer Truck [5.01 h]; Concrete Pump [5.01 h]; Road Crossing Duct for Street Lighting cables UPVC (2x?110mm) [22.19 m] |
| RHD4CZ7L015SL2400 | Backfilling of Duct Banks for Street Lighting Network - (RD-L-15)-Z7-L015-SL | 2026-09-29 → 2027-03-14 (+166d) | 2026-09-30 → 2027-03-15 (+166d) |  |  |
| 6722 | **RHD4-02-002-L015-(SL)-Street Lighting Drawpit** | 2027-05-22 → 2027-11-20 (+182d) | 2027-05-25 → 2027-11-23 (+182d) |  |  |
| RHD4CZ7L015SL5100 | Excavation of Drawpit size 600x600x900mm for Street Lighting Network - (RD-L-15)-Z7-L015-SL | 2027-05-22 → 2027-11-20 (+182d) | 2027-05-23 → 2027-11-21 (+182d) |  |  |
| RHD4CZ7L015SL5200 | Installation of Drawpit size 600x600x900mm for Street Lighting Network - (RD-L-15)-Z7-L015-SL | 2027-05-24 → 2027-11-22 (+182d) | 2027-05-25 → 2027-11-23 (+182d) |  |  |
| 6723 | **RHD4-02-002-L015-(SL)-Street Lighting cables** | 2027-05-26 → 2027-11-24 (+182d) | 2027-06-16 → 2027-12-15 (+182d) |  |  |
| RHD4CZ7L015SL3100 | Excavation for Street Lighting Cables for Street Lighting Network - (RD-L-15)-Z7-L015-SL | 2027-05-26 → 2027-11-24 (+182d) | 2027-06-01 → 2027-11-30 (+182d) |  |  |
| RHD4CZ7L015SL3200 | Cable Laying of Street Lighting Cables for Street Lighting Network - (RD-L-15)-Z7-L015-SL | 2027-06-02 → 2027-12-01 (+182d) | 2027-06-07 → 2027-12-06 (+182d) |  | resources Skilled labor [51.73 h]; Unskilled Labor [206.92 h]; Electrician [103.46 h]; Equipment Opreator [155.19 h]; Boom Truck [51.73 h]; Cable Laying Machine [103.46 h]; Cable, Copper 4x10mm2/ CU/XLPE/SWA/PVC + 1x10mm2 CU/PVC [854.86 m] → Skilled labor [51.73 h]; Unskilled Labor [206.92 h]; Electrician [103.46 h]; Equipment Opreator [155.2 h]; Boom Truck [51.73 h]; Cable Laying Machine [103.46 h]; Cable, Copper 4x10mm2/ CU/XLPE/SWA/PVC + 1x10mm2 CU/PVC [854.86 m] |
| RHD4CZ7L015SL3300 | Warning tape and Backfill for Street Lighting Cables for Street Lighting Network - (RD-L-15)-Z7-L015-SL | 2027-06-08 → 2027-12-07 (+182d) | 2027-06-13 → 2027-12-12 (+182d) |  |  |
| RHD4CZ7L015SL3400 | Testing of Street Lighting Cables for Street Lighting Network - (RD-L-15)-Z7-L015-SL | 2027-06-14 → 2027-12-13 (+182d) | 2027-06-16 → 2027-12-15 (+182d) |  |  |
| 6724 | **RHD4-02-002-L015-(SL)-Street Lighting Poles** | 2027-06-17 → 2027-12-16 (+182d) | 2027-07-13 → 2028-01-11 (+182d) |  |  |
| RHD4CZ7L015SL1100 | Excavation for RC Base for Lighting Poles for Street Lighting Network - (RD-L-15)-Z7-L015-SL | 2027-06-17 → 2027-12-16 (+182d) | 2027-06-21 → 2027-12-20 (+182d) |  |  |
| RHD4CZ7L015SL1200 | Installation for RC Base for Lighting Poles for Street Lighting Network - (RD-L-15)-Z7-L015-SL | 2027-06-22 → 2027-12-21 (+182d) | 2027-06-26 → 2027-12-25 (+182d) |  |  |
| RHD4CZ7L015SL1300 | Backfill for RC Base for Lighting Poles for Street Lighting Network - (RD-L-15)-Z7-L015-SL | 2027-06-27 → 2027-12-26 (+182d) | 2027-06-30 → 2027-12-29 (+182d) |  |  |
| RHD4CZ7L015SL1400 | Installation for Lighting Poles for Street Lighting Network - (RD-L-15)-Z7-L015-SL | 2027-07-01 → 2027-12-30 (+182d) | 2027-07-06 → 2028-01-04 (+182d) |  |  |
| RHD4CZ7L015SL1500 | Luminaire Installation for Lighting Poles for Street Lighting Network - (RD-L-15)-Z7-L015-SL | 2027-07-10 → 2028-01-08 (+182d) | 2027-07-13 → 2028-01-11 (+182d) |  |  |
| 6726 | **RHD4-02-002-L015-(SL)-Street Lighting Earthing System** | 2027-07-07 → 2028-01-05 (+182d) | 2027-07-08 → 2028-01-06 (+182d) |  |  |
| RHD4CZ7L015SL6100 | Installation of Earthing for Lighting Poles and Fedder Pillers for Street Lighting Network - (RD-L-15)-Z7-L015-SL | 2027-07-07 → 2028-01-05 (+182d) | 2027-07-08 → 2028-01-06 (+182d) |  |  |
| 6732 | **RHD4-02-002-Z7-L015-Telecommunications Network - TC** | 2026-09-20 → 2027-03-02 (+163d) | 2027-08-23 → 2028-02-21 (+182d) |  |  |
| 6733 | **RHD4-02-002-L015-(TC)-Telecommunications Ducts** | 2027-07-14 → 2028-01-12 (+182d) | 2027-08-23 → 2028-02-21 (+182d) |  |  |
| RHD4CZ7L015TC2100 | Excavation of HDPE Ducts for Telecom Network - (RD-L-15)-Z7-L015-TC | 2027-07-14 → 2028-01-12 (+182d) | 2027-07-25 → 2028-01-23 (+182d) |  |  |
| RHD4CZ7L015TC2200 | Installation of HDPE Ducts for Telecom Network - (RD-L-15)-Z7-L015-TC | 2027-07-26 → 2028-01-24 (+182d) | 2027-08-11 → 2028-02-09 (+182d) |  |  |
| RHD4CZ7L015TC2400 | Backfilling of HDPE Ducts for Telecom Network - (RD-L-15)-Z7-L015-TC | 2027-08-12 → 2028-02-10 (+182d) | 2027-08-23 → 2028-02-21 (+182d) |  |  |
| 6734 | **RHD4-02-002-L015-(TC)-Telecommunications Manholes** | 2027-07-26 → 2028-01-24 (+182d) | 2027-08-05 → 2028-02-03 (+182d) |  |  |
| RHD4CZ7L015TC5100 | Excavation for Manholes for Telecom Network - (RD-L-15)-Z7-L015-TC | 2027-07-26 → 2028-01-24 (+182d) | 2027-07-31 → 2028-01-29 (+182d) |  | resources Skilled labor [15.03 h]; Unskilled Labor [15.03 h]; Equipment Opreator [11.98 h]; Excavator-Poclain [5.99 h]; Dump Truck [5.99 h]; Manhole Type 1 - TC [1.05 nr]; Manhole Type 2 - TC [0.3 nr] → Skilled labor [15.03 h]; Unskilled Labor [15.03 h]; Equipment Opreator [12 h]; Excavator-Poclain [5.99 h]; Dump Truck [5.99 h]; Manhole Type 1 - TC [1.05 nr]; Manhole Type 2 - TC [0.3 nr] |
| RHD4CZ7L015TC5200 | Installation of Manholes for Telecom Network - (RD-L-15)-Z7-L015-TC | 2027-08-01 → 2028-01-30 (+182d) | 2027-08-05 → 2028-02-03 (+182d) |  |  |
| 6735 | **RHD4-02-002-L015-(TC)-Telecomminications Road Crossings** | 2026-09-20 → 2027-03-02 (+163d) | 2026-09-29 → 2027-03-14 (+166d) |  |  |
| RHD4CZ7L015TC3100 | Excavation for Road Crossings for Telecom Network - (RD-L-15)-Z7-L015-TC | 2026-09-20 → 2027-03-02 (+163d) | 2026-09-21 → 2027-03-03 (+163d) |  |  |
| RHD4CZ7L015TC3200 | Installation of Road Crossings for Telecom Network - (RD-L-15)-Z7-L015-TC | 2026-09-22 → 2027-03-04 (+163d) | 2026-09-24 → 2027-03-06 (+163d) |  |  |
| RHD4CZ7L015TC3300 | Pouring of Road Crossings for Telecom Network - (RD-L-15)-Z7-L015-TC | 2026-09-26 → 2027-03-07 (+162d) | 2026-09-27 → 2027-03-08 (+162d) |  |  |
| RHD4CZ7L015TC3400 | Backfilling of Road Crossings for Telecom Network - (RD-L-15)-Z7-L015-TC | 2026-09-28 → 2027-03-13 (+166d) | 2026-09-29 → 2027-03-14 (+166d) |  |  |
| 6736 | **RHD4-02-002-Z7-L015-Information and Communication Technologies - ICT** | 2026-09-22 → 2027-03-04 (+163d) | 2027-09-29 → 2028-04-02 (+186d) |  |  |
| 6737 | **RHD4-02-002-L015-(ICT)-Information and Communication Technologies Ducts** | 2027-08-24 → 2028-02-23 (+183d) | 2027-09-29 → 2028-04-02 (+186d) |  |  |
| RHD4CZ7L015ICT2100 | Excavation of HDPE Ducts for ICT Network - (RD-L-15)-Z7-L015-ICT | 2027-08-24 → 2028-02-23 (+183d) | 2027-09-02 → 2028-03-07 (+187d) |  |  |
| RHD4CZ7L015ICT2200 | Installation of HDPE Ducts for ICT Network - (RD-L-15)-Z7-L015-ICT | 2027-09-04 → 2028-03-08 (+186d) | 2027-09-18 → 2028-03-22 (+186d) |  |  |
| RHD4CZ7L015ICT2400 | Backfilling of HDPE Ducts for ICT Network - (RD-L-15)-Z7-L015-ICT | 2027-09-19 → 2028-03-23 (+186d) | 2027-09-29 → 2028-04-02 (+186d) |  |  |
| 6738 | **RHD4-02-002-L015-(ICT)-Information and Communication Technologies Manholes** | 2027-09-04 → 2028-03-08 (+186d) | 2027-09-09 → 2028-03-14 (+187d) |  |  |
| RHD4CZ7L015ICT5100 | Excavation for Manholes for ICT Network - (RD-L-15)-Z7-L015-ICT | 2027-09-04 → 2028-03-08 (+186d) | 2027-09-06 → 2028-03-11 (+187d) |  |  |
| RHD4CZ7L015ICT5200 | Installation of Manholes for ICT Network - (RD-L-15)-Z7-L015-ICT | 2027-09-07 → 2028-03-12 (+187d) | 2027-09-09 → 2028-03-14 (+187d) |  |  |
| 6739 | **RHD4-02-002-L015-(ICT)-Information and Communication Technologies Road Crossings** | 2026-09-22 → 2027-03-04 (+163d) | 2026-10-01 → 2027-03-16 (+166d) |  |  |
| RHD4CZ7L015ICT3100 | Excavation for Road Crossings for ICT Network - (RD-L-15)-Z7-L015-ICT | 2026-09-22 → 2027-03-04 (+163d) | 2026-09-24 → 2027-03-06 (+163d) |  |  |
| RHD4CZ7L015ICT3200 | Installation of Road Crossings for ICT Network - (RD-L-15)-Z7-L015-ICT | 2026-09-26 → 2027-03-07 (+162d) | 2026-09-27 → 2027-03-08 (+162d) |  |  |
| RHD4CZ7L015ICT3300 | Pouring of Road Crossings for ICT Network - (RD-L-15)-Z7-L015-ICT | 2026-09-28 → 2027-03-13 (+166d) | 2026-09-29 → 2027-03-14 (+166d) |  |  |
| RHD4CZ7L015ICT3400 | Backfilling of Road Crossings for ICT Network - (RD-L-15)-Z7-L015-ICT | 2026-09-30 → 2027-03-15 (+166d) | 2026-10-01 → 2027-03-16 (+166d) |  |  |
| 6740 | **RHD4-02-002-Z7-L015-Security Network - CCTV** | 2027-09-30 → 2028-04-03 (+186d) | 2027-11-08 → 2028-05-15 (+189d) |  |  |
| 499 | **RHD4-02-002-Z7-L015-(CCTV)-CCTV Poles** | 2027-10-06 → 2028-04-09 (+186d) | 2027-10-17 → 2028-04-19 (+185d) |  |  |
| RHD4CZ7L015CCTV1100 | Excavation for RC Base for CCTV Poles for Security Network - (RD-L-15)-Z7-L015-CCTV | 2027-10-06 → 2028-04-09 (+186d) | 2027-10-07 → 2028-04-10 (+186d) |  | resources Skilled labor [4.32 h]; Unskilled Labor [4.32 h]; Equipment Opreator [8.64 h]; Excavator-Poclain [2.18 h]; Dump Truck [2.18 h]; 25 Meters pole for CCTV Cameras [0.1 nr] → Skilled labor [4.32 h]; Unskilled Labor [4.32 h]; Equipment Opreator [8.64 h]; Excavator-Poclain [2.16 h]; Dump Truck [2.16 h]; 25 Meters pole for CCTV Cameras [0.1 nr] |
| RHD4CZ7L015CCTV1200 | Installation for RC Base for CCTV Poles for Security Network - (RD-L-15)-Z7-L015-CCTV | 2027-10-09 → 2028-04-11 (+185d) | 2027-10-10 → 2028-04-12 (+185d) |  | resources Skilled labor [4.32 h]; Unskilled Labor [4.32 h]; Equipment Opreator [8.64 h]; Excavator-Poclain [2.18 h]; Dump Truck [2.18 h]; 25 Meters pole for CCTV Cameras [0.25 nr] → Skilled labor [4.32 h]; Unskilled Labor [4.32 h]; Equipment Opreator [8.64 h]; Excavator-Poclain [2.16 h]; Dump Truck [2.16 h]; 25 Meters pole for CCTV Cameras [0.25 nr] |
| RHD4CZ7L015CCTV1300 | Backfill for RC Base for CCTV Poles for Security Network - (RD-L-15)-Z7-L015-CCTV | 2027-10-11 → 2028-04-13 (+185d) | 2027-10-12 → 2028-04-16 (+187d) | 2d → 2.03d | resources Skilled labor [2.88 h]; Unskilled Labor [2.88 h]; Equipment Opreator [5.44 h]; Excavator-Poclain [1.42 h]; Dump Truck [1.42 h]; 25 Meters pole for CCTV Cameras [0.05 nr] → Skilled labor [2.88 h]; Unskilled Labor [2.88 h]; Equipment Opreator [5.44 h]; Excavator-Poclain [1.44 h]; Dump Truck [1.44 h]; 25 Meters pole for CCTV Cameras [0.05 nr] |
| RHD4CZ7L015CCTV1400 | Installation for CCTV Poles for Security Network - (RD-L-15)-Z7-L015-CCTV | 2027-10-13 → 2028-04-16 (+186d) | 2027-10-14 → 2028-04-18 (+187d) |  | resources Skilled labor [7.2 h]; Unskilled Labor [14.56 h]; Electrician [7.2 h]; Equipment Opreator [7.2 h]; Boom Truck [3.59 h]; 25 Meters pole for CCTV Cameras [0.6 nr] → Skilled labor [7.2 h]; Unskilled Labor [14.56 h]; Electrician [7.2 h]; Equipment Opreator [7.2 h]; Boom Truck [3.6 h]; 25 Meters pole for CCTV Cameras [0.6 nr] |
| RHD4CZ7L015CCTV1500 | Protection post Installation for CCTV Poles for Security Network - (RD-L-15)-Z7-L015-CCTV | 2027-10-16 → 2028-04-18 (+185d) | 2027-10-17 → 2028-04-19 (+185d) |  |  |
| 501 | **RHD4-02-002-Z7-L015-(CCTV)-Power and Infrastructure** | 2027-10-16 → 2028-04-18 (+185d) | 2027-10-19 → 2028-04-22 (+186d) |  |  |
| RHD4CZ7L015CCTV4100 | Installation of Power outlet, UPS and midspan for PTZ Camerafor Cameras for Security Network - (RD-L-15)-Z7-L015-CCTV | 2027-10-16 → 2028-04-18 (+185d) | 2027-10-17 → 2028-04-20 (+186d) | 2d → 2.01d | resources Skilled labor [13.12 h]; Unskilled Labor [52.32 h]; Electrician [26.08 h]; Equipment Opreator [26.08 h]; Excavator-Poclain [6.53 h]; Dump Truck [6.53 h]; Outdoor ready IP66-rated midspan for PTZ Camera (The outdoor- ready midspan should be IP66/IP67- and NEMA 4X-rated [1 nr]; 1.2KVA Industrial type UPS located at FEC remote poles [1 nr] → Skilled labor [13.12 h]; Unskilled Labor [52.32 h]; Electrician [26.08 h]; Equipment Opreator [26.08 h]; Excavator-Poclain [6.56 h]; Dump Truck [6.56 h]; Outdoor ready IP66-rated midspan for PTZ Camera (The outdoor- ready midspan should be IP66/IP67- and NEMA 4X-rated [1 nr]; 1.2KVA Industrial type UPS located at FEC remote poles [1 nr] |
| RHD4CZ7L015CCTV4200 | Short Range Wireless PoP wireless Bridgefor CCTV Poles for Security Network - (RD-L-15)-Z7-L015-CCTV | 2027-10-18 → 2028-04-20 (+185d) | 2027-10-19 → 2028-04-22 (+186d) |  | resources Skilled labor [21.76 h]; Unskilled Labor [43.52 h]; Electrician [21.76 h]; Equipment Opreator [43.52 h]; Excavator-Poclain [10.89 h]; Dump Truck [10.89 h]; Short Range wireless point to point wireless bridge [2 nr] → Skilled labor [21.76 h]; Unskilled Labor [43.52 h]; Electrician [21.76 h]; Equipment Opreator [43.52 h]; Excavator-Poclain [10.88 h]; Dump Truck [10.88 h]; Short Range wireless point to point wireless bridge [2 nr] |
| 6741 | **RHD4-02-002-Z7-L015-(CCTV)-Civil Works** | 2027-09-30 → 2028-04-03 (+186d) | 2027-10-05 → 2028-04-08 (+186d) |  |  |
| RHD4CZ7L015CCTV2100 | Civil Works for Security Network - (RD-L-15)-Z7-L015-CCTV | 2027-09-30 → 2028-04-03 (+186d) | 2027-10-05 → 2028-04-08 (+186d) |  |  |
| 500 | **RHD4-02-002-Z7-L015-(CCTV)-Camera** | 2027-10-20 → 2028-04-23 (+186d) | 2027-10-21 → 2028-04-24 (+186d) |  |  |

| ID | Task | Start | Finish | Duration | Complete | Other |
| --- | --- | --- | --- | --- | --- | --- |
| RHD4CZ7L015CCTV3100 | Installation for Cameras for Security Network - (RD-L-15)-Z7-L015-CCTV | 2027-10-20 → 2028-04-23 (+186d) | 2027-10-21 → 2028-04-24 (+186d) |  |  |  |
| 503 | **RHD4-02-002-Z7-L015-(CCTV)-CCTV Panels and Components** | 2027-10-23 → 2028-04-25 (+185d) | 2027-11-08 → 2028-05-15 (+189d) |  |  |  |
| RHD4CZ7L015CCTV6100 | Installation for CCTV Panels for Security Network - (RD-L-15)-Z7-L015-CCTV | 2027-10-23 → 2028-04-25 (+185d) | 2027-11-08 → 2028-05-15 (+189d) |  |  |  |
| 6946 | **RHD4-02-002-Z7-A012** | 2026-08-18 → 2026-07-18 (-31d) | 2027-11-20 → 2028-05-27 (+189d) |  |  |  |
| 7125 | **RHD4-02-002-Z7-A012-Road Works - RD** | 2026-09-01 → 2026-07-18 (-45d) | 2027-11-20 → 2028-05-27 (+189d) |  |  |  |
| 7126 | **RHD4-02-002-A012-(RD)-Subgrade** | 2026-09-01 → 2026-07-18 (-45d) | 2026-09-05 → 2026-07-22 (-45d) |  |  |  |
| RHD4CZ7A012RD1100 | Supply, lay and compaction subgrade compacted thickness 300 mm for Roads - (RD-A-1 /2)-Z7-A012-RD | 2026-09-01 → 2026-07-18 A (-45d) | 2026-09-05 → 2026-07-22 A (-45d) |  | 0% → 100% |  |
| 7127 | **RHD4-02-002-A012-(RD)-Aggregate Base Course** | 2026-09-06 → 2026-10-17 (+41d) | 2026-09-09 → 2026-10-27 (+48d) |  |  |  |
| RHD4CZ7A012RD2100 | Supply, lay and compaction Aggregate base course compacted thickness 300 mmfor Roads - (RD-A-1 /2)-Z7-A012-RD | 2026-09-06 → 2026-10-17 A (+41d) | 2026-09-09 → 2026-10-27 A (+48d) | 4d → 7d | 0% → 100% | resources Skilled labor [35.72 h]; Unskilled Labor [71.55 h]; Equipment Opreator [452.82 h]; Water Truck [23.63 h]; Roller compactor [71.55 h]; Grader [71.55 h]; Dump Truck [286.2 h]; Aggregate Base Courses [2917.46 m3] → Skilled labor [35.72 h]; Unskilled Labor [71.55 h]; Equipment Opreator [452.8 h]; Water Truck [23.63 h]; Roller compactor [71.55 h]; Grader [71.55 h]; Dump Truck [286.2 h]; Aggregate Base Courses [2917.46 m3] |
| 7128 | **RHD4-02-002-A012-(RD)-Bituminous base course Two Layers, including (MC1)&(RC2)** | 2026-09-10 → 2027-02-20 (+163d) | 2027-06-08 → 2027-10-02 (+116d) |  |  |  |
| RHD4CZ7A012RD3100 | Supply, lay and Asphaltic base course including Prime Coat (MC1) for 1st Layer - (RD-A-1 /2)-Z7-A012-RD | 2026-09-10 → 2027-02-20 (+163d) | 2026-09-12 → 2027-02-24 (+165d) | 2d → 4d |  |  |
| RHD4CZ7A012RD3200 | Supply, lay and Asphaltic base course including Tack Coat (RC2) for 2nd Layer - (RD-A-1 /2)-Z7-A012-RD | 2027-06-05 → 2027-09-28 (+115d) | 2027-06-08 → 2027-10-02 (+116d) |  |  |  |
| 7130 | **RHD4-02-002-A012-(RD)-Precast Concrete Curb** | 2027-06-09 → 2027-10-03 (+116d) | 2027-06-19 → 2027-10-12 (+115d) |  |  |  |
| RHD4CZ7A012RD5100 | Supply and installation Precast Concrete Kerb for Roads - (RD-A-1 /2)-Z7-A012-RD | 2027-06-09 → 2027-10-03 (+116d) | 2027-06-19 → 2027-10-12 (+115d) |  |  |  |
| 7133 | **RHD4-02-002-A012-(RD)-Traffic Signage** | 2027-10-25 → 2028-04-27 (+185d) | 2027-10-31 → 2028-05-03 (+185d) |  |  |  |
| RHD4CZ7A012RD8100 | Installation of Traffic Signage for Road Network - (RD-A-1 /2)-Z7-A012-RD | 2027-10-25 → 2028-04-27 (+185d) | 2027-10-31 → 2028-05-03 (+185d) |  |  |  |
| 7129 | **RHD4-02-002-A012-(RD)-Bituminous concrete wearing course including tack coat (RC2)** | 2027-11-11 → 2028-05-18 (+189d) | 2027-11-13 → 2028-05-20 (+189d) |  |  |  |
| RHD4CZ7A012RD4100 | Supply, lay and compaction Asphaltic wearing course including tack Coat (RC2)for Road Network - (RD-A-1 /2)-Z7-A012-RD | 2027-11-11 → 2028-05-18 (+189d) | 2027-11-13 → 2028-05-20 (+189d) |  |  |  |
| 7132 | **RHD4-02-002-A012-(RD)-Pavement Marking** | 2027-11-14 → 2028-05-21 (+189d) | 2027-11-20 → 2028-05-27 (+189d) |  |  |  |
| RHD4CZ7A012RD7100 | Pavement Markings for Road Network - (RD-A-1 /2)-Z7-A012-RD | 2027-11-14 → 2028-05-21 (+189d) | 2027-11-20 → 2028-05-27 (+189d) |  |  |  |
| 6950 | **RHD4-02-002-Z7-A012-Storm Network - ST** | 2026-08-18 → 2026-08-04 (-14d) | 2027-01-28 → 2027-05-13 (+105d) |  |  |  |
| 2039 | **RHD4-02-002-A012-(ST)-GRP Pipes - 1000 mm diameter** | 2026-08-18 → 2026-08-05 (-13d) | 2026-08-31 → 2027-02-09 (+162d) |  |  |  |
| RHD4CZ7A012ST1106 | Excavation works for GRP Pipe Line 1000 mm - (RD-A-1 /2)-Z7-A012-ST | 2026-08-18 → 2026-08-05 A (-13d) | 2026-08-19 → 2026-08-08 A (-11d) |  | 0% → 100% |  |
| RHD4CZ7A012ST1206 | Bedding works for GRP Pipe Line 1000 mm - (RD-A-1 /2)-Z7-A012-ST | 2026-08-20 → 2026-08-09 A (-11d) | 2026-08-22 → 2026-08-11 A (-11d) |  | 0% → 100% |  |
| RHD4CZ7A012ST1306 | Installing for GRP Pipe Line 1000 mm - (RD-A-1 /2)-Z7-A012-ST | 2026-08-23 → 2026-08-12 A (-11d) | 2026-08-24 → 2026-08-13 A (-11d) |  | 0% → 100% |  |
| RHD4CZ7A012ST1506 | Backfilling and warning tape works for GRP Pipe Line 1000 mm - (RD-A-1 /2)-Z7-A012-ST | 2026-08-30 → 2026-08-15 A (-15d) | 2026-08-31 → 2026-08-17 A (-14d) |  | 0% → 100% |  |
| RHD4CZ7A012ST1406 | Primary Test for GRP Pipe Line 1000 mm - (RD-A-1 /2)-Z7-A012-ST | 2026-08-25 → 2027-02-08 (+167d) | 2026-08-26 → 2027-02-09 (+167d) |  |  |  |
| 5254 | **RHD4-02-002-A012-(ST)-GRP Pipes - 900 mm diameter** | 2027-01-11 → 2026-09-05 (-128d) | 2027-01-21 → 2027-05-06 (+105d) |  |  |  |
| RHD4CZ7A012ST1105 | Excavation works for GRP Pipe Line 900 mm - (RD-A-1 /2)-Z7-A012-ST | 2027-01-11 → 2026-09-05 A (-128d) | 2027-01-12 → 2026-09-06 A (-128d) |  | 0% → 100% |  |
| RHD4CZ7A012ST1205 | Bedding works for GRP Pipe Line 900 mm - (RD-A-1 /2)-Z7-A012-ST | 2027-01-13 → 2026-09-06 A (-129d) | 2027-01-14 → 2026-09-07 A (-129d) |  | 0% → 100% |  |
| RHD4CZ7A012ST1305 | Installing for GRP Pipe Line 900 mm - (RD-A-1 /2)-Z7-A012-ST | 2027-01-16 → 2026-09-07 A (-131d) | 2027-01-17 → 2026-09-08 A (-131d) |  | 0% → 100% | resources Unskilled Labor [7.95 h]; Plumber [4.03 h]; GRP (900mm Diameter) - ST - Depth: 1.51m - 2.5m [36.72 m]; GRP (900mm Diameter) - ST - Depth: 2.51m - 3.5m → Unskilled Labor [7.95 h]; Plumber [4 h]; GRP (900mm Diameter) - ST - Depth: 1.51m - 2.5m [36.72 m]; GRP (900mm Diameter) - ST - Depth: 2.51m - 3.5m |
| RHD4CZ7A012ST1505 | Backfilling and warning tape works for GRP Pipe Line 900 mm - (RD-A-1 /2)-Z7-A012-ST | 2027-01-20 → 2026-09-08 A (-134d) | 2027-01-21 → 2026-09-09 A (-134d) |  | 0% → 100% |  |
| RHD4CZ7A012ST1405 | Primary Test for GRP Pipe Line 900 mm - (RD-A-1 /2)-Z7-A012-ST | 2027-01-18 → 2027-05-05 (+107d) | 2027-01-19 → 2027-05-06 (+107d) |  |  |  |
| 6576 | **RHD4-02-002-L015-(ST)-GRP Pipes - 700 mm diameter** | 2027-01-16 → 2026-09-05 (-133d) | 2027-01-28 → 2027-05-06 (+98d) |  |  |  |
| RHD4CZ7A012ST1103 | Excavation works for GRP Pipe Line 700 mm - (RD-A-1 /2)-Z7-A012-ST | 2027-01-16 → 2026-09-05 A (-133d) | 2027-01-17 → 2026-09-06 A (-133d) |  | 0% → 100% | resources Skilled labor [3.7 h]; Unskilled Labor [3.7 h]; Equipment Opreator [4.47 h]; Excavator-Poclain [3.7 h]; Dump Truck [0.76 h]; GRP (700mm Diameter) - ST - Depth less than 1.5 m [6.84 m]; GRP (700mm Diameter) - ST - Depth: 1.51m - 2.5m → Skilled labor [3.7 h]; Unskilled Labor [3.7 h]; Equipment Opreator [4.47 h]; Excavator-Poclain [3.7 h]; Dump Truck [0.8 h]; GRP (700mm Diameter) - ST - Depth less than 1.5 m [6.84 m]; GRP (700mm Diameter) - ST - Depth: 1.51m - 2.5m |
| RHD4CZ7A012ST1203 | Bedding works for GRP Pipe Line 700 mm - (RD-A-1 /2)-Z7-A012-ST | 2027-01-18 → 2026-09-06 A (-134d) | 2027-01-19 → 2026-09-07 A (-134d) |  | 0% → 100% |  |
| RHD4CZ7A012ST1303 | Installing for GRP Pipe Line 700 mm - (RD-A-1 /2)-Z7-A012-ST | 2027-01-20 → 2026-09-07 A (-135d) | 2027-01-21 → 2026-09-08 A (-135d) |  | 0% → 100% |  |
| RHD4CZ7A012ST1503 | Backfilling and warning tape works for GRP Pipe Line 700 mm - (RD-A-1 /2)-Z7-A012-ST | 2027-01-27 → 2026-09-08 A (-141d) | 2027-01-28 → 2026-09-09 A (-141d) |  | 0% → 100% |  |
| RHD4CZ7A012ST1403 | Primary Test for GRP Pipe Line 700 mm - (RD-A-1 /2)-Z7-A012-ST | 2027-01-23 → 2027-05-05 (+102d) | 2027-01-24 → 2027-05-06 (+102d) |  |  |  |
| 6590 | **RHD4-02-002-L015-(ST)-MH Works - 1500 mm diameter** | 2026-08-18 → 2027-02-08 (+174d) | 2026-08-29 → 2027-02-18 (+173d) |  |  |  |
| RHD4CZ7A012ST3101 | Excavation and PC Blinding works for MH 1500 mm - (RD-A-1 /2)-Z7-A012-ST | 2026-08-18 → 2027-02-08 (+174d) | 2026-08-19 → 2027-02-09 (+174d) |  |  | resources Skilled labor [16.34 h]; Unskilled Labor [16.34 h]; Equipment Opreator [26.14 h]; Excavator-Poclain [16.34 h]; Water Truck [1.63 h]; Dump Truck [8.17 h]; MH (1500mm Diameter) - ST - depth 1.50 - 2.5m [0.25 nr]; MH (1500mm Diameter) - ST - depth 2.51 - 3.5m [0.5 nr] → Skilled labor [16.34 h]; Unskilled Labor [16.34 h]; Equipment Opreator [26.14 h]; Excavator-Poclain [16.34 h]; Water Truck [1.6 h]; Dump Truck [8.17 h]; MH (1500mm Diameter) - ST - depth 1.50 - 2.5m [0.25 nr]; MH (1500mm Diameter) - ST - depth 2.51 - 3.5m [0.5 nr] |
| RHD4CZ7A012ST3201 | Installation of Base for MH 1500 mm - (RD-A-1 /2)-Z7-A012-ST | 2026-08-20 → 2027-02-10 (+174d) | 2026-08-22 → 2027-02-11 (+173d) |  |  |  |
| RHD4CZ7A012ST3301 | MH Ring and C.Slab works and Backfilling works for MH 1500 mm - (RD-A-1 /2)-Z7-A012-ST | 2026-08-23 → 2027-02-13 (+174d) | 2026-08-24 → 2027-02-14 (+174d) |  |  |  |
| RHD4CZ7A012ST3401 | Steel Cover for MH 1500 mm - (RD-A-1 /2)-Z7-A012-ST | 2026-08-25 → 2027-02-15 (+174d) | 2026-08-26 → 2027-02-16 (+174d) |  |  |  |
| RHD4CZ7A012ST3501 | Finishing, Benching, Testing works for MH 1500 mm - (RD-A-1 /2)-Z7-A012-ST | 2026-08-27 → 2027-02-17 (+174d) | 2026-08-29 → 2027-02-18 (+173d) |  |  |  |
| 6024 | **RHD4-02-002-A012-(ST)-MH Works - 2000 mm diameter** | 2027-01-13 → 2026-08-04 (-162d) | 2027-01-24 → 2027-05-13 (+109d) |  |  |  |
| RHD4CZ7A012ST3102 | Excavation and PC Blinding works for MH 2000 mm - (RD-A-1 /2)-Z7-A012-ST | 2027-01-13 → 2026-08-04 A (-162d) | 2027-01-14 → 2026-08-06 A (-161d) |  | 0% → 100% | resources Skilled labor [16.34 h]; Unskilled Labor [16.34 h]; Equipment Opreator [26.14 h]; Excavator-Poclain [16.34 h]; Water Truck [1.63 h]; Dump Truck [8.17 h]; MH (2000mm Diameter) - ST - depth 2.51 - 3.5m [0.75 nr]; MH (2000mm Diameter) - ST - depth 3.51 -4.5m [0.25 nr] → Skilled labor [16.34 h]; Unskilled Labor [16.34 h]; Equipment Opreator [26.14 h]; Excavator-Poclain [16.34 h]; Water Truck [1.6 h]; Dump Truck [8.17 h]; MH (2000mm Diameter) - ST - depth 2.51 - 3.5m [0.75 nr]; MH (2000mm Diameter) - ST - depth 3.51 -4.5m [0.25 nr] |
| RHD4CZ7A012ST3202 | Installation of Base for MH 2000 mm - (RD-A-1 /2)-Z7-A012-ST | 2027-01-16 → 2026-09-19 A (-119d) | 2027-01-17 → 2027-05-06 (+109d) |  | 0% → 75% |  |
| RHD4CZ7A012ST3302 | MH Ring and C.Slab works and Backfilling works for MH 2000 mm - (RD-A-1 /2)-Z7-A012-ST | 2027-01-18 → 2026-09-21 A (-119d) | 2027-01-19 → 2027-05-09 (+110d) |  | 0% → 75% |  |
| RHD4CZ7A012ST3402 | Steel Cover for MH 2000 mm - (RD-A-1 /2)-Z7-A012-ST | 2027-01-20 → 2027-05-10 (+110d) | 2027-01-21 → 2027-05-11 (+110d) |  |  |  |
| RHD4CZ7A012ST3502 | Finishing, Benching, Testing works for MH 2000 mm - (RD-A-1 /2)-Z7-A012-ST | 2027-01-23 → 2027-05-12 (+109d) | 2027-01-24 → 2027-05-13 (+109d) |  |  |  |
| 6010 | **RHD4-02-002-A012-(ST)-GRP Pipes - 800 mm diameter** | 2027-01-13 → 2026-09-05 (-130d) | 2027-01-26 → 2027-05-06 (+100d) |  |  |  |
| RHD4CZ7A012ST1104 | Excavation works for GRP Pipe Line 800 mm - (RD-A-1 /2)-Z7-A012-ST | 2027-01-13 → 2026-09-05 A (-130d) | 2027-01-14 → 2026-09-06 A (-130d) |  | 0% → 100% |  |
| RHD4CZ7A012ST1204 | Bedding works for GRP Pipe Line 800 mm - (RD-A-1 /2)-Z7-A012-ST | 2027-01-16 → 2026-09-06 A (-132d) | 2027-01-17 → 2026-09-07 A (-132d) |  | 0% → 100% |  |
| RHD4CZ7A012ST1304 | Installing for GRP Pipe Line 800 mm - (RD-A-1 /2)-Z7-A012-ST | 2027-01-18 → 2026-09-07 A (-133d) | 2027-01-19 → 2026-09-08 A (-133d) |  | 0% → 100% |  |
| RHD4CZ7A012ST1504 | Backfilling and warning tape works for GRP Pipe Line 800 mm - (RD-A-1 /2)-Z7-A012-ST | 2027-01-25 → 2026-09-08 A (-139d) | 2027-01-26 → 2026-09-09 A (-139d) |  | 0% → 100% |  |
| RHD4CZ7A012ST1404 | Primary Test for GRP Pipe Line 800 mm - (RD-A-1 /2)-Z7-A012-ST | 2027-01-20 → 2027-05-05 (+105d) | 2027-01-21 → 2027-05-06 (+105d) |  |  |  |
| 6965 | **RHD4-02-002-A012-(ST)-UPVC Pipes - 300 mm diameter** | 2027-01-18 → 2026-08-23 (-148d) | 2027-01-28 → 2027-05-06 (+98d) |  |  |  |
| RHD4CZ7A012ST2100 | Excavation works for UPVC Pipe Line 300 mm - (RD-A-1 /2)-Z7-A012-ST | 2027-01-18 → 2026-08-23 A (-148d) | 2027-01-19 → 2026-08-24 A (-148d) |  | 0% → 100% |  |
| RHD4CZ7A012ST2200 | Bedding works for UPVC Pipe Line 300 mm - (RD-A-1 /2)-Z7-A012-ST | 2027-01-20 → 2026-08-25 A (-148d) | 2027-01-21 → 2026-08-26 A (-148d) |  | 0% → 100% |  |
| RHD4CZ7A012ST2300 | Installing for UPVC Pipe Line 300 mm - (RD-A-1 /2)-Z7-A012-ST | 2027-01-23 → 2026-08-27 A (-149d) | 2027-01-24 → 2026-08-29 A (-148d) |  | 0% → 100% |  |
| RHD4CZ7A012ST2500 | Backfilling and warning tape works for UPVC Pipe Line 300 mm - (RD-A-1 /2)-Z7-A012-ST | 2027-01-27 → 2026-09-05 A (-144d) | 2027-01-28 → 2026-09-06 A (-144d) |  | 0% → 100% |  |
| RHD4CZ7A012ST2400 | Primary Test for UPVC Pipe Line 300 mm - (RD-A-1 /2)-Z7-A012-ST | 2027-01-25 → 2027-05-05 (+100d) | 2027-01-26 → 2027-05-06 (+100d) |  |  |  |
| 6973 | **RHD4-02-002-A012-(ST)-Concrete Encasement** | 2027-01-23 → 2026-09-07 (-138d) | 2027-01-24 → 2026-09-08 (-138d) |  |  |  |
| RHD4CZ7A012ST6100 | Pipe Encasement for Storm Pipelines - (RD-A-1 /2)-Z7-A012-ST | 2027-01-23 → 2026-09-07 A (-138d) | 2027-01-24 → 2026-09-08 A (-138d) |  | 0% → 100% |  |
| 6974 | **RHD4-02-002-Z7-A012-Catch Basin - ST** | 2027-01-16 → 2026-08-18 (-151d) | 2027-01-28 → 2027-05-11 (+103d) |  |  |  |
| 6975 | **RHD4-02-002-A012-(ST)-Single Catch Basin Works** | 2027-01-16 → 2026-08-18 (-151d) | 2027-01-27 → 2027-05-10 (+103d) |  |  |  |
| RHD4CZ7A012ST7100 | Excavation works for Single Catch Basin - (RD-A-1 /2)-Z7-A012-ST | 2027-01-16 → 2026-08-18 A (-151d) | 2027-01-17 → 2026-08-19 A (-151d) |  | 0% → 100% |  |
| RHD4CZ7A012ST7200 | PC Blinding, Installation and Pipe connection for Single Catch Basin - (RD-A-1 /2)-Z7-A012-ST | 2027-01-18 → 2026-09-05 A (-135d) | 2027-01-19 → 2026-09-06 A (-135d) |  | 0% → 100% |  |
| RHD4CZ7A012ST7300 | Rings & C.Slab & Final Backfill for Single Catch Basin - (RD-A-1 /2)-Z7-A012-ST | 2027-01-20 → 2026-09-07 A (-135d) | 2027-01-21 → 2026-09-19 A (-124d) |  | 0% → 100% |  |

| ID | Task | Start | Finish | Duration | Complete | Other |
| --- | --- | --- | --- | --- | --- | --- |
| RHD4CZ7A012ST7400 | Steel Cover for Single Catch Basin - (RD-A-1 /2)-Z7-A012-ST | 2027-01-23 → 2027-05-05 (+102d) | 2027-01-24 → 2027-05-06 (+102d) |  |  |  |
| RHD4CZ7A012ST7500 | Finishing and Insulation works for Single Catch Basin - (RD-A-1 /2)-Z7-A012-ST | 2027-01-25 → 2027-05-08 (+103d) | 2027-01-27 → 2027-05-10 (+103d) |  |  |  |
| 6976 | **RHD4-02-002-A012-(ST)-Double Catch Basin Works** | 2027-01-18 → 2026-08-22 (-149d) | 2027-01-28 → 2027-05-11 (+103d) |  |  |  |
| RHD4CZ7A012ST8100 | Excavation works for Double Catch Basin - (RD-A-1 /2)-Z7-A012-ST | 2027-01-18 → 2026-08-22 A (-149d) | 2027-01-19 → 2026-08-23 A (-149d) |  | 0% → 100% |  |
| RHD4CZ7A012ST8200 | PC Blinding, Installation and Pipe connection for Double Catch Basin - (RD-A-1 /2)-Z7-A012-ST | 2027-01-20 → 2026-09-05 A (-137d) | 2027-01-21 → 2026-09-06 A (-137d) |  | 0% → 100% |  |
| RHD4CZ7A012ST8300 | Rings & C.Slab & Final Backfillfor Double Catch Basin - (RD-A-1 /2)-Z7-A012-ST | 2027-01-23 → 2026-09-07 A (-138d) | 2027-01-24 → 2026-09-19 A (-127d) |  | 0% → 100% |  |
| RHD4CZ7A012ST8400 | Steel Cover for Double Catch Basin - (RD-A-1 /2)-Z7-A012-ST | 2027-01-25 → 2027-05-08 (+103d) | 2027-01-26 → 2027-05-09 (+103d) |  |  |  |
| RHD4CZ7A012ST8500 | Finishing and Insulation works for Double Catch Basin - (RD-A-1 /2)-Z7-A012-ST | 2027-01-27 → 2027-05-10 (+103d) | 2027-01-28 → 2027-05-11 (+103d) |  |  |  |
| 6810 | **RHD4-02-002-Z7-A012-Sewage Network - SW** | 2027-01-30 → 2026-08-04 (-179d) | 2027-03-08 → 2027-06-15 (+99d) |  |  |  |
| 6433 | **RHD4-02-002-A012-(SW)-GRP Pipes - 300 mm diameter** | 2027-01-30 → 2026-08-11 (-172d) | 2027-02-09 → 2027-05-20 (+100d) |  |  |  |
| RHD4CZ7A012SW1100 | Excavation works for GRP Pipe Line 300 mm - (RD-A-1 /2)-Z7-A012-SW | 2027-01-30 → 2026-08-11 A (-172d) | 2027-01-31 → 2026-10-26 A (-97d) |  | 0% → 100% |  |
| RHD4CZ7A012SW1200 | Bedding works for GRP Pipe Line 300 mm - (RD-A-1 /2)-Z7-A012-SW | 2027-02-01 → 2026-10-27 A (-97d) | 2027-02-02 → 2027-05-09 (+96d) |  | 0% → 31% |  |
| RHD4CZ7A012SW1300 | Installing for GRP Pipe Line 300 mm - (RD-A-1 /2)-Z7-A012-SW | 2027-02-03 → 2026-10-29 A (-97d) | 2027-02-04 → 2027-05-11 (+96d) |  | 0% → 30% |  |
| RHD4CZ7A012SW1400 | Primary Test for GRP Pipe Line 300 mm - (RD-A-1 /2)-Z7-A012-SW | 2027-02-06 → 2027-05-12 (+95d) | 2027-02-07 → 2027-05-13 (+95d) |  |  |  |
| RHD4CZ7A012SW1500 | Backfilling and warning tape works for GRP Pipe Line 300 mm - (RD-A-1 /2)-Z7-A012-SW | 2027-02-08 → 2027-05-19 (+100d) | 2027-02-09 → 2027-05-20 (+100d) |  |  |  |
| 6442 | **RHD4-02-002-A012-(SW)-MH Works - 1200 mm diameter** | 2027-02-01 → 2026-08-04 (-181d) | 2027-03-08 → 2027-06-15 (+99d) |  |  |  |
| RHD4CZ7A012SW3100 | Excavation and PC Blinding works for MH 1200 mm - (RD-A-1 /2)-Z7-A012-SW | 2027-02-01 → 2026-08-04 A (-181d) | 2027-02-07 → 2027-05-13 (+95d) |  | 0% → 86% |  |
| RHD4CZ7A012SW3200 | Installation of Base for MH 1200 mm - (RD-A-1 /2)-Z7-A012-SW | 2027-02-08 → 2026-09-20 A (-141d) | 2027-02-15 → 2027-05-26 (+100d) |  | 0% → 29% |  |
| RHD4CZ7A012SW3300 | MH Ring and C.Slab works and Backfilling works for MH 1200 mm - (RD-A-1 /2)-Z7-A012-SW | 2027-02-16 → 2027-05-27 (+100d) | 2027-02-24 → 2027-06-03 (+99d) |  |  |  |
| RHD4CZ7A012SW3400 | Steel Cover for MH 1200 mm - (RD-A-1 /2)-Z7-A012-SW | 2027-02-25 → 2027-06-05 (+100d) | 2027-02-28 → 2027-06-07 (+99d) |  |  |  |
| RHD4CZ7A012SW3500 | Finishing, Benching, Testing works for MH 1200 mm - (RD-A-1 /2)-Z7-A012-SW | 2027-03-01 → 2027-06-08 (+99d) | 2027-03-08 → 2027-06-15 (+99d) |  |  |  |
| 6434 | **RHD4-02-002-A012-(SW)-GRP Pipes - 400 mm diameter** | 2027-02-08 → 2026-09-15 (-146d) | 2027-03-03 → 2027-06-10 (+99d) |  |  |  |
| RHD4CZ7A012SW1101 | Excavation works for GRP Pipe Line 400 mm - (RD-A-1 /2)-Z7-A012-SW | 2027-02-08 → 2026-09-15 A (-146d) | 2027-02-09 → 2027-05-20 (+100d) |  | 0% → 18% |  |
| RHD4CZ7A012SW1201 | Bedding works for GRP Pipe Line 400 mm - (RD-A-1 /2)-Z7-A012-SW | 2027-02-10 → 2026-10-27 A (-106d) | 2027-02-11 → 2027-05-23 (+101d) |  | 0% → 21% |  |
| RHD4CZ7A012SW1301 | Installing for GRP Pipe Line 400 mm - (RD-A-1 /2)-Z7-A012-SW | 2027-02-25 → 2026-10-28 A (-120d) | 2027-02-27 → 2027-06-06 (+99d) |  | 0% → 21% |  |
| RHD4CZ7A012SW1401 | Primary Test for GRP Pipe Line 400 mm - (RD-A-1 /2)-Z7-A012-SW | 2027-02-28 → 2027-06-07 (+99d) | 2027-03-01 → 2027-06-08 (+99d) |  |  |  |
| RHD4CZ7A012SW1501 | Backfilling and warning tape works for GRP Pipe Line 400 mm - (RD-A-1 /2)-Z7-A012-SW | 2027-03-02 → 2027-06-09 (+99d) | 2027-03-03 → 2027-06-10 (+99d) |  |  |  |
| 6438 | **RHD4-02-002-A012-(SW)-UPVC Pipes - 200 mm diameter** | 2027-02-10 → 2026-09-15 (-148d) | 2027-02-21 → 2027-05-23 (+91d) |  |  |  |
| RHD4CZ7A012SW2100 | Excavation works for UPVC Pipe Line 200 mm - (RD-A-1 /2)-Z7-A012-SW | 2027-02-10 → 2026-09-15 A (-148d) | 2027-02-11 → 2026-09-16 A (-148d) |  | 0% → 100% |  |
| RHD4CZ7A012SW2200 | Bedding works for UPVC Pipe Line 200 mm - (RD-A-1 /2)-Z7-A012-SW | 2027-02-13 → 2026-10-27 A (-109d) | 2027-02-14 → 2026-10-28 A (-109d) |  | 0% → 100% |  |
| RHD4CZ7A012SW2300 | Installing for UPVC Pipe Line 200 mm - (RD-A-1 /2)-Z7-A012-SW | 2027-02-15 → 2026-10-28 A (-110d) | 2027-02-16 → 2026-10-29 A (-110d) |  | 0% → 100% |  |
| RHD4CZ7A012SW2500 | Backfilling and warning tape works for UPVC Pipe Line 200 mm - (RD-A-1 /2)-Z7-A012-SW | 2027-02-20 → 2026-10-31 A (-112d) | 2027-02-21 → 2026-11-01 A (-112d) |  | 0% → 100% |  |
| RHD4CZ7A012SW2400 | Primary Test for UPVC Pipe Line 200 mm - (RD-A-1 /2)-Z7-A012-SW | 2027-02-17 → 2027-05-22 (+94d) | 2027-02-18 → 2027-05-23 (+94d) |  |  |  |
| 7036 | **RHD4-02-002-Z7-A012-Potable Network - PT** | 2027-02-23 → 2027-05-24 (+90d) | 2027-03-27 → 2027-06-26 (+91d) |  |  |  |
| 7040 | **RHD4-02-002-A012-(PT)-HDPE Pipes - 400 mm diameter** | 2027-02-23 → 2027-05-24 (+90d) | 2027-03-15 → 2027-06-14 (+91d) |  |  |  |
| RHD4CZ7A012PT1103 | Excavation works for HDPE Pipline 400 mm - (RD-A-1 /2)-Z7-A012-PT | 2027-02-23 → 2027-05-24 (+90d) | 2027-02-25 → 2027-05-26 (+90d) |  |  |  |
| RHD4CZ7A012PT1203 | Bedding works for HDPE Pipline 400 mm - (RD-A-1 /2)-Z7-A012-PT | 2027-02-27 → 2027-05-27 (+89d) | 2027-03-01 → 2027-05-30 (+90d) |  |  | resources Skilled labor [18.19 h]; Unskilled Labor [50.42 h]; Plumber [7.08 h]; Equipment Opreator [43.34 h]; Excavator-Poclain [18.19 h]; Boom Truck [7.08 h]; Dump Truck [18.19 h]; HDPE (400mm Diameter) - PT - Depth: less than 1.5m [25 m]; HDPE (400mm Diameter) - PT - Depth: 1.51m - 2.5m → Skilled labor [18.19 h]; Unskilled Labor [50.4 h]; Plumber [7.08 h]; Equipment Opreator [43.34 h]; Excavator-Poclain [18.19 h]; Boom Truck [7.08 h]; Dump Truck [18.19 h]; HDPE (400mm Diameter) - PT - Depth: less than 1.5m [25 m]; HDPE (400mm Diameter) - PT - Depth: 1.51m - 2.5m |
| RHD4CZ7A012PT1303 | Installing for HDPE Pipline 400 mm - (RD-A-1 /2)-Z7-A012-PT | 2027-03-02 → 2027-05-31 (+90d) | 2027-03-06 → 2027-06-03 (+89d) |  |  |  |
| RHD4CZ7A012PT1403 | Primary Test for HDPE Pipline 400 mm - (RD-A-1 /2)-Z7-A012-PT | 2027-03-07 → 2027-06-09 (+94d) | 2027-03-08 → 2027-06-10 (+94d) |  |  |  |
| RHD4CZ7A012PT1503 | Backfilling and warning tape works for HDPE Pipline 400 mm - (RD-A-1 /2)-Z7-A012-PT | 2027-03-13 → 2027-06-12 (+91d) | 2027-03-15 → 2027-06-14 (+91d) |  |  |  |
| 7043 | **RHD4-02-002-A012-(PT)-Butterfly Valve Chamber** | 2027-03-16 → 2027-06-15 (+91d) | 2027-03-24 → 2027-06-23 (+91d) |  |  |  |
| RHD4CZ7A012PT2100 | Excavation and Bedding for Butterfly Valve Chamber for Potable Water Network - (RD-A-1 /2)-Z7-A012-PT | 2027-03-16 → 2027-06-15 (+91d) | 2027-03-17 → 2027-06-16 (+91d) |  |  |  |
| RHD4CZ7A012PT2200 | PC works for Butterfly Valve Chamber for Potable Water Network - (RD-A-1 /2)-Z7-A012-PT | 2027-03-18 → 2027-06-17 (+91d) | 2027-03-20 → 2027-06-19 (+91d) |  |  |  |
| RHD4CZ7A012PT2300 | Installation for Butterfly Valve Chamber for Potable Water Network - (RD-A-1 /2)-Z7-A012-PT | 2027-03-21 → 2027-06-20 (+91d) | 2027-03-22 → 2027-06-21 (+91d) |  |  |  |
| RHD4CZ7A012PT2400 | Backfilling works for Butterfly Valve Chamber for Potable Water Network - (RD-A-1 /2)-Z7-A012-PT | 2027-03-23 → 2027-06-22 (+91d) | 2027-03-24 → 2027-06-23 (+91d) |  |  |  |
| 7044 | **RHD4-02-002-A012-(PT)-Butterfly Valves** | 2027-03-23 → 2027-06-22 (+91d) | 2027-03-27 → 2027-06-26 (+91d) |  |  |  |
| RHD4CZ7A012PT3101 | Installation for Butterfly Valves for Potable Water Network - (RD-A-1 /2)-Z7-A012-PT | 2027-03-23 → 2027-06-22 (+91d) | 2027-03-24 → 2027-06-23 (+91d) |  |  |  |
| RHD4CZ7A012PT3201 | Stem and Service box for Butterfly Valves for Potable Water Network - (RD-A-1 /2)-Z7-A012-PT | 2027-03-25 → 2027-06-24 (+91d) | 2027-03-27 → 2027-06-26 (+91d) |  |  |  |
| 7049 | **RHD4-02-002-A012-(PT)-Fire Hydrant** | 2027-03-16 → 2027-06-15 (+91d) | 2027-03-27 → 2027-06-26 (+91d) |  |  |  |
| RHD4CZ7A012PT4100 | Excavation and Bedding and Pipe Installation for Fire Hydrant - (RD-A-1 /2)-Z7-A012-PT | 2027-03-16 → 2027-06-15 (+91d) | 2027-03-17 → 2027-06-16 (+91d) |  |  |  |
| RHD4CZ7A012PT4200 | Valve Installation for Fire Hydrant - (RD-A-1 /2)-Z7-A012-PT | 2027-03-18 → 2027-06-17 (+91d) | 2027-03-20 → 2027-06-19 (+91d) |  |  |  |
| RHD4CZ7A012PT4300 | Stem for Fire Hydrant - (RD-A-1 /2)-Z7-A012-PT | 2027-03-21 → 2027-06-20 (+91d) | 2027-03-22 → 2027-06-21 (+91d) |  |  |  |
| RHD4CZ7A012PT4400 | Fire Installation for Fire Hydrant - (RD-A-1 /2)-Z7-A012-PT | 2027-03-23 → 2027-06-22 (+91d) | 2027-03-24 → 2027-06-23 (+91d) |  |  |  |
| RHD4CZ7A012PT4500 | Protection Barriers for Fire Hydrant - (RD-A-1 /2)-Z7-A012-PT | 2027-03-25 → 2027-06-24 (+91d) | 2027-03-27 → 2027-06-26 (+91d) |  |  |  |
| 7050 | **RHD4-02-002-A012-(PT)-Concrete Encasement** | 2027-03-02 → 2027-05-31 (+90d) | 2027-03-06 → 2027-06-08 (+94d) |  |  |  |
| RHD4CZ7A012PT5100 | Pipe Encasement for Potable Pipelines - (RD-A-1 /2)-Z7-A012-PT | 2027-03-02 → 2027-05-31 (+90d) | 2027-03-06 → 2027-06-08 (+94d) | 4d → 8d |  |  |
| 7051 | **RHD4-02-002-Z7-A012-Irrigation Network - IRR** | 2027-02-23 → 2027-05-24 (+90d) | 2027-04-07 → 2027-07-03 (+87d) |  |  |  |
| 7055 | **RHD4-02-002-A012-(IRR)-HDPE Pipes - 250 mm diameter** | 2027-02-23 → 2027-05-24 (+90d) | 2027-03-06 → 2027-06-03 (+89d) |  |  |  |
| RHD4CZ7A012IRR1103 | Excavation works for HDPE Pipline 250 mm - (RD-A-1 /2)-Z7-A012-IRR | 2027-02-23 → 2027-05-24 (+90d) | 2027-02-24 → 2027-05-25 (+90d) |  |  |  |
| RHD4CZ7A012IRR1203 | Bedding works for HDPE Pipline 250 mm - (RD-A-1 /2)-Z7-A012-IRR | 2027-02-25 → 2027-05-26 (+90d) | 2027-02-27 → 2027-05-27 (+89d) |  |  |  |
| RHD4CZ7A012IRR1303 | Installing for HDPE Pipline 250 mm - (RD-A-1 /2)-Z7-A012-IRR | 2027-02-28 → 2027-05-29 (+90d) | 2027-03-01 → 2027-05-30 (+90d) |  |  |  |
| RHD4CZ7A012IRR1403 | Primary Test for HDPE Pipline 250 mm - (RD-A-1 /2)-Z7-A012-IRR | 2027-03-02 → 2027-05-31 (+90d) | 2027-03-03 → 2027-06-01 (+90d) |  |  |  |
| RHD4CZ7A012IRR1503 | Backfilling and warning tape works for HDPE Pipline 250 mm - (RD-A-1 /2)-Z7-A012-IRR | 2027-03-04 → 2027-06-02 (+90d) | 2027-03-06 → 2027-06-03 (+89d) |  |  |  |
| 6115 | **RHD4-02-002-A012-(IRR)-Gate Valves (Direct Buried)** | 2027-03-06 → 2027-06-03 (+89d) | 2027-03-13 → 2027-06-07 (+86d) |  |  |  |
| RHD4CZ7A012IRR3100 | Installation for Direct Buried Gate Valves - (RD-A-1 /2)-Z7-A012-IRR | 2027-03-06 → 2027-06-03 (+89d) | 2027-03-07 → 2027-06-05 (+90d) |  |  |  |
| RHD4CZ7A012IRR3200 | Stem and Service box for Direct Buried Gate Valves - (RD-A-1 /2)-Z7-A012-IRR | 2027-03-08 → 2027-06-06 (+90d) | 2027-03-13 → 2027-06-07 (+86d) |  |  |  |
| 8762 | **RHD4-02-002-A012-(IRR)-HDPE Pipes - 500 mm diameter** | 2027-02-25 → 2027-05-26 (+90d) | 2027-03-16 → 2027-06-10 (+86d) |  |  |  |
| RHD4CZ7A012IRR1107 | Excavation works for HDPE Pipline 500 mm - (RD-A-1 /2)-Z7-A012-IRR | 2027-02-25 → 2027-05-26 (+90d) | 2027-02-28 → 2027-05-29 (+90d) |  |  |  |
| RHD4CZ7A012IRR1207 | Bedding works for HDPE Pipline 500 mm - (RD-A-1 /2)-Z7-A012-IRR | 2027-03-01 → 2027-05-30 (+90d) | 2027-03-03 → 2027-06-01 (+90d) |  |  |  |
| RHD4CZ7A012IRR1307 | Installing for HDPE Pipline 500 mm - (RD-A-1 /2)-Z7-A012-IRR | 2027-03-04 → 2027-06-02 (+90d) | 2027-03-07 → 2027-06-05 (+90d) |  |  |  |

| ID | Task | Start | Finish | Complete | Other |
| --- | --- | --- | --- | --- | --- |
| RHD4CZ7A012IRR1407 | Primary Test for HDPE Pipline 500 mm - (RD-A-1 /2)-Z7-A012-IRR | 2027-03-08 → 2027-06-06 (+90d) | 2027-03-13 → 2027-06-07 (+86d) |  |  |
| RHD4CZ7A012IRR1507 | Backfilling and warning tape works for HDPE Pipline 500 mm - (RD-A-1 /2)-Z7-A012-IRR | 2027-03-14 → 2027-06-08 (+86d) | 2027-03-16 → 2027-06-10 (+86d) |  |  |
| 6111 | **RHD4-02-002-A012-(IRR)-HDPE Pipes - 315 mm diameter** | 2027-03-01 → 2027-05-30 (+90d) | 2027-03-15 → 2027-06-09 (+86d) |  |  |
| RHD4CZ7A012IRR1104 | Excavation works for HDPE Pipline 315 mm - (RD-A-1 /2)-Z7-A012-IRR | 2027-03-01 → 2027-05-30 (+90d) | 2027-03-02 → 2027-05-31 (+90d) |  |  |
| RHD4CZ7A012IRR1204 | Bedding works for HDPE Pipline 315 mm - (RD-A-1 /2)-Z7-A012-IRR | 2027-03-03 → 2027-06-01 (+90d) | 2027-03-04 → 2027-06-02 (+90d) |  |  |
| RHD4CZ7A012IRR1304 | Installing for HDPE Pipline 315 mm - (RD-A-1 /2)-Z7-A012-IRR | 2027-03-06 → 2027-06-03 (+89d) | 2027-03-07 → 2027-06-05 (+90d) |  |  |
| RHD4CZ7A012IRR1404 | Primary Test for HDPE Pipline 315 mm - (RD-A-1 /2)-Z7-A012-IRR | 2027-03-08 → 2027-06-06 (+90d) | 2027-03-13 → 2027-06-07 (+86d) |  |  |
| RHD4CZ7A012IRR1504 | Backfilling and warning tape works for HDPE Pipline 315 mm - (RD-A-1 /2)-Z7-A012-IRR | 2027-03-14 → 2027-06-08 (+86d) | 2027-03-15 → 2027-06-09 (+86d) |  |  |
| 6116 | **RHD4-02-002-A012-(IRR)-Butterfly Valve Chamber** | 2027-03-16 → 2027-06-10 (+86d) | 2027-03-24 → 2027-06-19 (+87d) |  |  |
| RHD4CZ7A012IRR2100 | Excavation and Bedding for Butterfly Valve Chamber for Irrigation Network - (RD-A-1 /2)-Z7-A012-IRR | 2027-03-16 → 2027-06-10 (+86d) | 2027-03-17 → 2027-06-12 (+87d) |  |  |
| RHD4CZ7A012IRR2200 | PC works for Butterfly Valve Chamber for Irrigation Network - (RD-A-1 /2)-Z7-A012-IRR | 2027-03-18 → 2027-06-13 (+87d) | 2027-03-20 → 2027-06-14 (+86d) |  |  |
| RHD4CZ7A012IRR2300 | Installation for Butterfly Valve Chamber for Irrigation Network - (RD-A-1 /2)-Z7-A012-IRR | 2027-03-21 → 2027-06-15 (+86d) | 2027-03-22 → 2027-06-16 (+86d) |  |  |
| RHD4CZ7A012IRR2400 | Backfilling works for Butterfly Valve Chamber for Irrigation Network - (RD-A-1 /2)-Z7-A012-IRR | 2027-03-23 → 2027-06-17 (+86d) | 2027-03-24 → 2027-06-19 (+87d) |  |  |
| 6117 | **RHD4-02-002-A012-(IRR)-Butterfly Valves** | 2027-03-23 → 2027-06-17 (+86d) | 2027-03-27 → 2027-06-21 (+86d) |  |  |
| RHD4CZ7A012IRR3101 | Installation for Butterfly Valves for Irrigation Network - (RD-A-1 /2)-Z7-A012-IRR | 2027-03-23 → 2027-06-17 (+86d) | 2027-03-24 → 2027-06-19 (+87d) |  |  |
| RHD4CZ7A012IRR3201 | Stem and Service box for Butterfly Valves for Irrigation Network - (RD-A-1 /2)-Z7-A012-IRR | 2027-03-25 → 2027-06-20 (+87d) | 2027-03-27 → 2027-06-21 (+86d) |  |  |
| 6685 | **RHD4-02-002-A012-(IRR)-Wash out Chamber** | 2027-03-25 → 2027-06-20 (+87d) | 2027-04-03 → 2027-06-28 (+86d) |  |  |
| RHD4CZ7A012IRR2101 | Excavation and Bedding for Wash out Chamber for Irrigation Network - (RD-A-1 /2)-Z7-A012-IRR | 2027-03-25 → 2027-06-20 (+87d) | 2027-03-27 → 2027-06-21 (+86d) |  |  |
| RHD4CZ7A012IRR2201 | PC works for Wash out Chamber for Irrigation Network - (RD-A-1 /2)-Z7-A012-IRR | 2027-03-28 → 2027-06-22 (+86d) | 2027-03-29 → 2027-06-23 (+86d) |  |  |
| RHD4CZ7A012IRR2301 | Installation for Wash out Chamber for Irrigation Network - (RD-A-1 /2)-Z7-A012-IRR | 2027-03-30 → 2027-06-24 (+86d) | 2027-03-31 → 2027-06-26 (+87d) |  |  |
| RHD4CZ7A012IRR2401 | Backfilling works for Wash out Chamber for Irrigation Network - (RD-A-1 /2)-Z7-A012-IRR | 2027-04-01 → 2027-06-27 (+87d) | 2027-04-03 → 2027-06-28 (+86d) |  |  |
| 6686 | **RHD4-02-002-A012-(IRR)-Wash out Valves** | 2027-04-01 → 2027-06-27 (+87d) | 2027-04-05 → 2027-06-30 (+86d) |  |  |
| RHD4CZ7A012IRR3102 | Installation for Wash out Valve for Irrigation Network - (RD-A-1 /2)-Z7-A012-IRR | 2027-04-01 → 2027-06-27 (+87d) | 2027-04-03 → 2027-06-28 (+86d) |  |  |
| RHD4CZ7A012IRR3202 | Stem and Service box for Wash out Valve for Irrigation Network - (RD-A-1 /2)-Z7-A012-IRR | 2027-04-04 → 2027-06-29 (+86d) | 2027-04-05 → 2027-06-30 (+86d) |  |  |
| 1771 | **RHD4-02-002-A012-(IRR)-Concrete Encasement** | 2027-04-04 → 2027-06-29 (+86d) | 2027-04-07 → 2027-07-03 (+87d) |  |  |
| RHD4CZ7A012IRR5100 | Pipe Encasement for Irrigation Pipelines - (RD-A-1 /2)-Z7-A012-IRR | 2027-04-04 → 2027-06-29 (+86d) | 2027-04-07 → 2027-07-03 (+87d) |  | resources Skilled labor [40.62 h]; Unskilled Labor [40.62 h]; Equipment Opreator [44.65 h]; Concrete Mixer Truck [4.03 h]; Dump Truck [40.62 h]; Pipe Encasement - TSE [18.65 m3] → Skilled labor [40.62 h]; Unskilled Labor [40.62 h]; Equipment Opreator [44.65 h]; Concrete Mixer Truck [4 h]; Dump Truck [40.62 h]; Pipe Encasement - TSE [18.65 m3] |
| 7085 | **RHD4-02-002-Z7-A012-Medium Voltage Network - MV** | 2026-09-13 → 2026-08-04 (-40d) | 2027-02-10 → 2027-06-14 (+124d) |  |  |
| 7088 | **RHD4-02-002-A012-(MV)-Medium Voltage cables 3Cx 500 mm²** | 2026-12-29 → 2027-04-27 (+119d) | 2027-01-23 → 2027-05-26 (+123d) |  |  |
| RHD4CZ7A012MV3100 | Installation of Medium Voltage Cables 3Cx 500 mm² - (RD-A-1 /2)-Z7-A012-MV | 2026-12-29 → 2027-04-27 (+119d) | 2027-01-07 → 2027-05-06 (+119d) |  | resources Skilled labor [89.63 h]; Unskilled Labor [358.73 h]; Electrician [179.36 h]; Equipment Opreator [268.99 h]; Boom Truck [89.63 h]; Cable Laying Machine [179.36 h]; Cable 13.8 kV 3Cx 500 mm² Al/XLPE,/LLDPE / Unarmored [3705.22 m] → Skilled labor [89.6 h]; Unskilled Labor [358.73 h]; Electrician [179.36 h]; Equipment Opreator [268.99 h]; Boom Truck [89.6 h]; Cable Laying Machine [179.36 h]; Cable 13.8 kV 3Cx 500 mm² Al/XLPE,/LLDPE / Unarmored [3705.22 m] |
| RHD4CZ7A012MV3200 | Joints Installation of Medium Voltage Cables 3Cx 500 mm² - (RD-A-1 /2)-Z7-A012-MV | 2027-01-09 → 2027-05-08 (+119d) | 2027-01-12 → 2027-05-11 (+119d) |  |  |
| RHD4CZ7A012MV3300 | Testing of Medium Voltage Cables 3Cx 500 mm² - (RD-A-1 /2)-Z7-A012-MV | 2027-01-13 → 2027-05-12 (+119d) | 2027-01-23 → 2027-05-26 (+123d) |  | resources Skilled labor [89.63 h]; Unskilled Labor [358.73 h]; Electrician [179.36 h]; Cable 13.8 kV 3Cx 500 mm² Al/XLPE,/LLDPE / Unarmored [411.69 m] → Skilled labor [89.6 h]; Unskilled Labor [358.73 h]; Electrician [179.36 h]; Cable 13.8 kV 3Cx 500 mm² Al/XLPE,/LLDPE / Unarmored [411.69 m] |
| 1793 | **RHD4-02-002-A012-(MV)-Medium Voltage cables 3Cx 50 mm²** | 2027-01-24 → 2027-05-27 (+123d) | 2027-01-25 → 2027-05-29 (+124d) |  |  |
| RHD4CZ7A012MV3401 | Termination of Medium Voltage Cables 3Cx 50 mm² - (RD-A-1 /2)-Z7-A012-MV | 2027-01-24 → 2027-05-27 (+123d) | 2027-01-25 → 2027-05-29 (+124d) |  |  |
| 1794 | **RHD4-02-002-A012-(MV)-Normally open Point (Outdoor Type)** | 2027-01-26 → 2027-05-30 (+124d) | 2027-01-30 → 2027-06-02 (+123d) |  |  |
| RHD4CZ7A012MV4100 | Installation for Normally open Point - (RD-A-1 /2)-Z7-A012-MV | 2027-01-26 → 2027-05-30 (+124d) | 2027-01-27 → 2027-05-31 (+124d) |  |  |
| RHD4CZ7A012MV4200 | Termination for Normally open Point - (RD-A-1 /2)-Z7-A012-MV | 2027-01-28 → 2027-06-01 (+124d) | 2027-01-30 → 2027-06-02 (+123d) |  |  |
| 1791 | **RHD4-02-002-A012-(MV)-Medium Voltage duct banks** | 2026-09-13 → 2026-08-04 (-40d) | 2026-10-07 → 2026-08-15 (-53d) |  |  |
| RHD4CZ7A012MV2100 | Excavation of Duct Banks for Medium Voltage Network - (RD-A-1 /2)-Z7-A012-MV | 2026-09-13 → 2026-08-04 A (-40d) | 2026-09-17 → 2026-08-09 A (-39d) | 0% → 100% |  |
| RHD4CZ7A012MV2200 | Installation of Duct Banks for Medium Voltage Network - (RD-A-1 /2)-Z7-A012-MV | 2026-09-19 → 2026-08-06 A (-44d) | 2026-09-27 → 2026-08-13 A (-45d) | 0% → 100% |  |
| RHD4CZ7A012MV2300 | Pouring of Duct Banks for Medium Voltage Network - (RD-A-1 /2)-Z7-A012-MV | 2026-09-28 → 2026-08-09 A (-50d) | 2026-10-03 → 2026-08-13 A (-51d) | 0% → 100% |  |
| RHD4CZ7A012MV2400 | Backfilling of Duct Banks for Medium Voltage Network - (RD-A-1 /2)-Z7-A012-MV | 2026-10-04 → 2026-08-11 A (-54d) | 2026-10-07 → 2026-08-15 A (-53d) | 0% → 100% |  |
| 7086 | **RHD4-02-002-A012-(MV)-Medium Voltage cable trench** | 2026-12-17 → 2027-04-15 (+119d) | 2027-02-10 → 2027-06-14 (+124d) |  |  |
| RHD4CZ7A012MV1100 | Excavation for Medium Voltage Trench - (RD-A-1 /2)-Z7-A012-MV | 2026-12-17 → 2027-04-15 (+119d) | 2026-12-28 → 2027-04-26 (+119d) |  | resources Skilled labor [98.01 h]; Unskilled Labor [196.03 h]; Equipment Opreator [294.04 h]; Excavator-Poclain [98.01 h]; Dump Truck [196.03 h]; Excavation for Trench size 40cm wide and 80cm deep ( for 1 cables) [281.56 m3]; Excavation for Trench size 60cm wide and 80cm deep ( for 2 cables) [23.85 m3]; Excavation for Trench size 180cm wide and 80cm deep (for 6 cables) [120.1 m3]; Excavation for Trench size 240cm wide and 80cm deep (for 9 cables) [204.52 m3] → Skilled labor [98.01 h]; Unskilled Labor [196 h]; Equipment Opreator [294.04 h]; Excavator-Poclain [98.01 h]; Dump Truck [196 h]; Excavation for Trench size 40cm wide and 80cm deep ( for 1 cables) [281.56 m3]; Excavation for Trench size 60cm wide and 80cm deep ( for 2 cables) [23.85 m3]; Excavation for Trench size 180cm wide and 80cm deep (for 6 cables) [120.1 m3]; Excavation for Trench size 240cm wide and 80cm deep (for 9 cables) [204.52 m3] |
| RHD4CZ7A012MV1200 | Trench Backfilling for Medium Voltage Network - (RD-A-1 /2)-Z7-A012-MV | 2027-01-31 → 2027-06-03 (+123d) | 2027-02-10 → 2027-06-14 (+124d) |  | resources Skilled labor [98.01 h]; Unskilled Labor [98.01 h]; Equipment Opreator [196.03 h]; Dump Truck [196.03 h]; Excavation for Trench size 40cm wide and 80cm deep ( for 1 cables) [120.67 m3]; Excavation for Trench size 60cm wide and 80cm deep ( for 2 cables) [10.22 m3]; Excavation for Trench size 180cm wide and 80cm deep (for 6 cables) [51.47 m3]; Excavation for Trench size 240cm wide and 80cm deep (for 9 cables) [87.65 m3] → Skilled labor [98.01 h]; Unskilled Labor [98.01 h]; Equipment Opreator [196 h]; Dump Truck [196 h]; Excavation for Trench size 40cm wide and 80cm deep ( for 1 cables) [120.67 m3]; Excavation for Trench size 60cm wide and 80cm deep ( for 2 cables) [10.22 m3]; Excavation for Trench size 180cm wide and 80cm deep (for 6 cables) [51.47 m3]; Excavation for Trench size 240cm wide and 80cm deep (for 9 cables) [87.65 m3] |
| 7092 | **RHD4-02-002-Z7-A012-Low Voltage Network - LV** | 2026-10-08 → 2026-08-04 (-65d) | 2027-03-02 → 2027-07-03 (+123d) |  |  |
| 7093 | **RHD4-02-002-A012-(LV)-Low Voltage duct banks** | 2026-10-08 → 2026-08-04 (-65d) | 2026-11-02 → 2027-03-25 (+143d) |  |  |
| RHD4CZ7A012LV2100 | Excavation of Duct Banks for Low Voltage Network - (RD-A-1 /2)-Z7-A012-LV | 2026-10-08 → 2026-08-04 A (-65d) | 2026-10-13 → 2027-03-02 (+140d) | 0% → 50% |  |
| RHD4CZ7A012LV2200 | Installation of Duct Banks for Low Voltage Network - (RD-A-1 /2)-Z7-A012-LV | 2026-10-14 → 2026-08-06 A (-69d) | 2026-10-22 → 2027-03-15 (+144d) | 0% → 50% |  |
| RHD4CZ7A012LV2300 | Pouring of Duct Banks for Low Voltage Network - (RD-A-1 /2)-Z7-A012-LV | 2026-10-24 → 2026-08-09 A (-76d) | 2026-10-28 → 2027-03-21 (+144d) | 0% → 50% | resources Skilled labor [53.8 h]; Unskilled Labor [53.8 h]; Equipment Opreator [21.56 h]; Concrete Mixer Truck [10.78 h]; Concrete Pump [10.78 h]; Duct bank for LV cables UPVC (2xø110mm) [48.15 m] → Skilled labor [53.8 h]; Unskilled Labor [53.8 h]; Equipment Opreator [21.6 h]; Concrete Mixer Truck [10.78 h]; Concrete Pump [10.78 h]; Duct bank for LV cables UPVC (2xø110mm) [48.15 m] |
| RHD4CZ7A012LV2400 | Backfilling of Duct Banks for Low Voltage Network - (RD-A-1 /2)-Z7-A012-LV | 2026-10-29 → 2026-08-11 A (-79d) | 2026-11-02 → 2027-03-25 (+143d) | 0% → 50% |  |
| 7094 | **RHD4-02-002-A012-(LV)-Low Voltage Drawpit** | 2027-02-11 → 2027-06-15 (+124d) | 2027-02-15 → 2027-06-19 (+124d) |  |  |
| RHD4CZ7A012LV5100 | Excavation of Drawpit size 900x900x1000mm for Low Voltage Network - (RD-A-1 /2)-Z7-A012-LV | 2027-02-11 → 2027-06-15 (+124d) | 2027-02-13 → 2027-06-16 (+123d) |  |  |
| RHD4CZ7A012LV5200 | Installation of Drawpit size 900x900x1000mm for Low Voltage Network - (RD-A-1 /2)-Z7-A012-LV | 2027-02-14 → 2027-06-17 (+123d) | 2027-02-15 → 2027-06-19 (+124d) |  |  |
| 7095 | **RHD4-02-002-A012-(LV)-Low Voltage cables** | 2027-02-16 → 2027-06-20 (+124d) | 2027-03-02 → 2027-07-03 (+123d) |  |  |
| RHD4CZ7A012LV3100 | Excavation for Low Voltage Cables for Low Voltage Network - (RD-A-1 /2)-Z7-A012-LV | 2027-02-16 → 2027-06-20 (+124d) | 2027-02-20 → 2027-06-23 (+123d) |  |  |
| RHD4CZ7A012LV3200 | Cable Laying of Low Voltage Cables for Low Voltage Network - (RD-A-1 /2)-Z7-A012-LV | 2027-02-21 → 2027-06-24 (+123d) | 2027-02-24 → 2027-06-27 (+123d) |  |  |
| RHD4CZ7A012LV3300 | Warning tape and Backfill for Low Voltage Cables for Low Voltage Network - (RD-A-1 /2)-Z7-A012-LV | 2027-02-25 → 2027-06-28 (+123d) | 2027-02-28 → 2027-06-30 (+122d) |  |  |
| RHD4CZ7A012LV3400 | Testing of Low Voltage Cables for Low Voltage Network - (RD-A-1 /2)-Z7-A012-LV | 2027-03-01 → 2027-07-01 (+122d) | 2027-03-02 → 2027-07-03 (+123d) |  |  |
| 7098 | **RHD4-02-002-Z7-A012-Street Lighting Network - SL** | 2027-03-03 → 2027-07-04 (+123d) | 2027-03-31 → 2027-07-28 (+119d) |  |  |
| 7100 | **RHD4-02-002-A012-(SL)-Street Lighting Drawpit** | 2027-03-03 → 2027-07-04 (+123d) | 2027-03-07 → 2027-07-07 (+122d) |  |  |
| RHD4CZ7A012SL5100 | Excavation of Drawpit size 600x600x900mm for Street Lighting Network - (RD-A-1 /2)-Z7-A012-SL | 2027-03-03 → 2027-07-04 (+123d) | 2027-03-04 → 2027-07-05 (+123d) |  | resources Skilled labor [0.87 h]; Unskilled Labor [0.87 h]; Equipment Opreator [0.76 h]; Excavator-Poclain [0.33 h]; Dump Truck [0.33 h]; Drawpit with medium duty steel cover, size600x600x900mm, [0.15 Unit] → Skilled labor [0.87 h]; Unskilled Labor [0.87 h]; Equipment Opreator [0.8 h]; Excavator-Poclain [0.33 h]; Dump Truck [0.33 h]; Drawpit with medium duty steel cover, size600x600x900mm, [0.15 Unit] |
| RHD4CZ7A012SL5200 | Installation of Drawpit size 600x600x900mm for Street Lighting Network - (RD-A-1 /2)-Z7-A012-SL | 2027-03-06 → 2027-07-06 (+122d) | 2027-03-07 → 2027-07-07 (+122d) |  |  |
| 7101 | **RHD4-02-002-A012-(SL)-Street Lighting cables** | 2027-03-08 → 2027-07-08 (+122d) | 2027-03-20 → 2027-07-17 (+119d) |  |  |
| RHD4CZ7A012SL3100 | Excavation for Street Lighting Cables for Street Lighting Network - (RD-A-1 /2)-Z7-A012-SL | 2027-03-08 → 2027-07-08 (+122d) | 2027-03-13 → 2027-07-10 (+119d) |  |  |
| RHD4CZ7A012SL3200 | Cable Laying of Street Lighting Cables for Street Lighting Network - (RD-A-1 /2)-Z7-A012-SL | 2027-03-14 → 2027-07-11 (+119d) | 2027-03-15 → 2027-07-12 (+119d) |  |  |
| RHD4CZ7A012SL3300 | Warning tape and Backfill for Street Lighting Cables for Street Lighting Network - (RD-A-1 /2)-Z7-A012-SL | 2027-03-16 → 2027-07-13 (+119d) | 2027-03-17 → 2027-07-14 (+119d) |  |  |
| RHD4CZ7A012SL3400 | Testing of Street Lighting Cables for Street Lighting Network - (RD-A-1 /2)-Z7-A012-SL | 2027-03-18 → 2027-07-15 (+119d) | 2027-03-20 → 2027-07-17 (+119d) |  |  |
| 7102 | **RHD4-02-002-A012-(SL)-Street Lighting Poles** | 2027-03-21 → 2027-07-18 (+119d) | 2027-03-31 → 2027-07-28 (+119d) |  |  |
| RHD4CZ7A012SL1100 | Excavation for RC Base for Lighting Poles for Street Lighting Network - (RD-A-1 /2)-Z7-A012-SL | 2027-03-21 → 2027-07-18 (+119d) | 2027-03-22 → 2027-07-19 (+119d) |  |  |
| RHD4CZ7A012SL1200 | Installation for RC Base for Lighting Poles for Street Lighting Network - (RD-A-1 /2)-Z7-A012-SL | 2027-03-23 → 2027-07-20 (+119d) | 2027-03-24 → 2027-07-21 (+119d) |  |  |

| ID | Task | Start | Finish | Duration | Complete | Other |
| --- | --- | --- | --- | --- | --- | --- |
| RHD4CZ7A012SL1300 | Backfill for RC Base for Lighting Poles for Street Lighting Network - (RD-A-1 /2)-Z7-A012-SL | 2027-03-25 → 2027-07-22 (+119d) | 2027-03-27 → 2027-07-24 (+119d) |  |  |  |
| RHD4CZ7A012SL1400 | Installation for Lighting Poles for Street Lighting Network - (RD-A-1 /2)-Z7-A012-SL | 2027-03-28 → 2027-07-25 (+119d) | 2027-03-29 → 2027-07-26 (+119d) |  |  |  |
| RHD4CZ7A012SL1500 | Luminaire Installation for Lighting Poles for Street Lighting Network - (RD-A-1 /2)-Z7-A012-SL | 2027-03-30 → 2027-07-27 (+119d) | 2027-03-31 → 2027-07-28 (+119d) |  |  |  |
| 7110 | **RHD4-02-002-Z7-A012-Telecommunications Network - TC** | 2026-08-20 → 2026-08-04 (-16d) | 2027-04-17 → 2027-08-14 (+119d) |  |  |  |
| 7111 | **RHD4-02-002-A012-(TC)-Telecommunications Ducts** | 2027-04-01 → 2027-07-29 (+119d) | 2027-04-17 → 2027-08-14 (+119d) |  |  |  |
| RHD4CZ7A012TC2100 | Excavation of HDPE Ducts for Telecom Network - (RD-A-1 /2)-Z7-A012-TC | 2027-04-01 → 2027-07-29 (+119d) | 2027-04-05 → 2027-08-02 (+119d) |  |  |  |
| RHD4CZ7A012TC2200 | Installation of HDPE Ducts for Telecom Network - (RD-A-1 /2)-Z7-A012-TC | 2027-04-06 → 2027-08-03 (+119d) | 2027-04-12 → 2027-08-09 (+119d) |  |  |  |
| RHD4CZ7A012TC2400 | Backfilling of HDPE Ducts for Telecom Network - (RD-A-1 /2)-Z7-A012-TC | 2027-04-13 → 2027-08-10 (+119d) | 2027-04-17 → 2027-08-14 (+119d) |  |  |  |
| 7112 | **RHD4-02-002-A012-(TC)-Telecommunications Manholes** | 2027-04-06 → 2027-08-03 (+119d) | 2027-04-12 → 2027-08-09 (+119d) |  |  |  |
| RHD4CZ7A012TC5100 | Excavation for Manholes for Telecom Network - (RD-A-1 /2)-Z7-A012-TC | 2027-04-06 → 2027-08-03 (+119d) | 2027-04-08 → 2027-08-05 (+119d) |  |  |  |
| RHD4CZ7A012TC5200 | Installation of Manholes for Telecom Network - (RD-A-1 /2)-Z7-A012-TC | 2027-04-10 → 2027-08-07 (+119d) | 2027-04-12 → 2027-08-09 (+119d) |  |  |  |
| 7113 | **RHD4-02-002-A012-(TC)-Telecomminications Road Crossings** | 2026-08-20 → 2026-08-04 (-16d) | 2026-08-29 → 2026-08-12 (-17d) |  |  |  |
| RHD4CZ7A012TC3100 | Excavation for Road Crossings for Telecom Network - (RD-A-1 /2)-Z7-A012-TC | 2026-08-20 → 2026-08-04 A (-16d) | 2026-08-22 → 2026-08-05 A (-17d) |  | 0% → 100% |  |
| RHD4CZ7A012TC3200 | Installation of Road Crossings for Telecom Network - (RD-A-1 /2)-Z7-A012-TC | 2026-08-23 → 2026-08-06 A (-17d) | 2026-08-24 → 2026-08-08 A (-16d) |  | 0% → 100% |  |
| RHD4CZ7A012TC3300 | Pouring of Road Crossings for Telecom Network - (RD-A-1 /2)-Z7-A012-TC | 2026-08-25 → 2026-08-09 A (-16d) | 2026-08-26 → 2026-08-10 A (-16d) |  | 0% → 100% |  |
| RHD4CZ7A012TC3400 | Backfilling of Road Crossings for Telecom Network - (RD-A-1 /2)-Z7-A012-TC | 2026-08-27 → 2026-08-11 A (-16d) | 2026-08-29 → 2026-08-12 A (-17d) |  | 0% → 100% |  |
| 7114 | **RHD4-02-002-Z7-A012-Information and Communication Technologies - ICT** | 2026-08-20 → 2026-08-04 (-16d) | 2027-06-03 → 2027-09-27 (+116d) |  |  |  |
| 7115 | **RHD4-02-002-A012-(ICT)-Information and Communication Technologies Ducts** | 2027-04-18 → 2027-08-15 (+119d) | 2027-05-27 → 2027-09-19 (+115d) |  |  |  |
| RHD4CZ7A012ICT2100 | Excavation of HDPE Ducts for ICT Network - (RD-A-1 /2)-Z7-A012-ICT | 2027-04-18 → 2027-08-15 (+119d) | 2027-04-27 → 2027-08-24 (+119d) |  |  |  |
| RHD4CZ7A012ICT2200 | Installation of HDPE Ducts for ICT Network - (RD-A-1 /2)-Z7-A012-ICT | 2027-04-28 → 2027-08-25 (+119d) | 2027-05-12 → 2027-09-08 (+119d) |  |  |  |
| RHD4CZ7A012ICT2400 | Backfilling of HDPE Ducts for ICT Network - (RD-A-1 /2)-Z7-A012-ICT | 2027-05-13 → 2027-09-09 (+119d) | 2027-05-27 → 2027-09-19 (+115d) |  |  |  |
| 7116 | **RHD4-02-002-A012-(ICT)-Information and Communication Technologies Manholes** | 2027-05-29 → 2027-09-20 (+114d) | 2027-06-03 → 2027-09-27 (+116d) |  |  |  |
| RHD4CZ7A012ICT5100 | Excavation for Manholes for ICT Network - (RD-A-1 /2)-Z7-A012-ICT | 2027-05-29 → 2027-09-20 (+114d) | 2027-05-31 → 2027-09-22 (+114d) |  |  |  |
| RHD4CZ7A012ICT5200 | Installation of Manholes for ICT Network - (RD-A-1 /2)-Z7-A012-ICT | 2027-06-01 → 2027-09-25 (+116d) | 2027-06-03 → 2027-09-27 (+116d) |  |  |  |
| 7117 | **RHD4-02-002-A012-(ICT)-Information and Communication Technologies Road Crossings** | 2026-08-20 → 2026-08-04 (-16d) | 2026-08-29 → 2026-08-12 (-17d) |  |  |  |
| RHD4CZ7A012ICT3100 | Excavation for Road Crossings for ICT Network - (RD-A-1 /2)-Z7-A012-ICT | 2026-08-20 → 2026-08-04 A (-16d) | 2026-08-22 → 2026-08-05 A (-17d) |  | 0% → 100% |  |
| RHD4CZ7A012ICT3200 | Installation of Road Crossings for ICT Network - (RD-A-1 /2)-Z7-A012-ICT | 2026-08-23 → 2026-08-06 A (-17d) | 2026-08-24 → 2026-08-08 A (-16d) |  | 0% → 100% |  |
| RHD4CZ7A012ICT3300 | Pouring of Road Crossings for ICT Network - (RD-A-1 /2)-Z7-A012-ICT | 2026-08-25 → 2026-08-09 A (-16d) | 2026-08-26 → 2026-08-10 A (-16d) |  | 0% → 100% |  |
| RHD4CZ7A012ICT3400 | Backfilling of Road Crossings for ICT Network - (RD-A-1 /2)-Z7-A012-ICT | 2026-08-27 → 2026-08-11 A (-16d) | 2026-08-29 → 2026-08-12 A (-17d) |  | 0% → 100% |  |
| 6001 | **RHD4-02-002-Z7-C02** |  | 2027-11-23 → 2028-05-30 (+189d) |  |  |  |
| 6180 | **RHD4-02-002-Z7-C02-Road Works - RD** | 2026-09-01 → 2027-03-06 (+186d) | 2027-11-23 → 2028-05-30 (+189d) |  |  |  |
| 6181 | **RHD4-02-002-C02-(RD)-Subgrade** | 2026-09-01 → 2027-03-06 (+186d) | 2026-09-05 → 2027-03-18 (+194d) |  |  |  |
| RHD4CZ7C02RD1100 | Supply, lay and compaction subgrade compacted thickness 300 mm for Roads - (RD-C-2)-Z7-C02-RD | 2026-09-01 → 2027-03-06 (+186d) | 2026-09-05 → 2027-03-18 (+194d) | 4d → 9d |  |  |
| 6182 | **RHD4-02-002-C02-(RD)-Aggregate Base Course** | 2026-09-06 → 2027-03-20 (+195d) | 2026-09-08 → 2027-03-25 (+198d) |  |  |  |
| RHD4CZ7C02RD2100 | Supply, lay and compaction Aggregate base course compacted thickness 300 mmfor Roads - (RD-C-2)-Z7-C02-RD | 2026-09-06 → 2027-03-20 (+195d) | 2026-09-08 → 2027-03-25 (+198d) | 3d → 6d |  |  |
| 6183 | **RHD4-02-002-C02-(RD)-Bituminous base course Two Layers, including (MC1)&(RC2)** | 2026-09-09 → 2027-03-27 (+199d) | 2027-10-06 → 2028-05-02 (+209d) |  |  |  |
| RHD4CZ7C02RD3100 | Supply, lay and Asphaltic base course including Prime Coat (MC1) for 1st Layer - (RD-C-2)-Z7-C02-RD | 2026-09-09 → 2027-03-27 (+199d) | 2026-09-12 → 2027-03-29 (+198d) |  |  | resources Skilled labor [25.59 h]; Unskilled Labor [153.77 h]; Equipment Opreator [384.54 h]; Bobcat [25.59 h]; Roller compactor [25.59 h]; Asphalt Paver [25.59 h]; Rubber Compactor [51.29 h]; MC1/RC2 Sprinkler [25.59 h]; Dump Truck [230.77 h]; Bituminous base course (Grading I - Class A), including Prime coat (MC1) & tack coate (RC2) [937.96 m3] → Skilled labor [25.6 h]; Unskilled Labor [153.77 h]; Equipment Opreator [384.54 h]; Bobcat [25.6 h]; Roller compactor [25.6 h]; Asphalt Paver [25.6 h]; Rubber Compactor [51.29 h]; MC1/RC2 Sprinkler [25.6 h]; Dump Truck [230.77 h]; Bituminous base course (Grading I - Class A), including Prime coat (MC1) & tack coate (RC2) [937.96 m3] |
| RHD4CZ7C02RD3200 | Supply, lay and Asphaltic base course including Tack Coat (RC2) for 2nd Layer - (RD-C-2)-Z7-C02-RD | 2027-10-04 → 2028-04-30 (+209d) | 2027-10-06 → 2028-05-02 (+209d) |  |  | resources Skilled labor [25.59 h]; Unskilled Labor [153.77 h]; Equipment Opreator [384.54 h]; Bobcat [25.59 h]; Roller compactor [25.59 h]; Asphalt Paver [25.59 h]; Rubber Compactor [51.29 h]; MC1/RC2 Sprinkler [25.59 h]; Dump Truck [230.77 h]; Bituminous base course (Grading I - Class A), including Prime coat (MC1) & tack coate (RC2) [937.96 m3] → Skilled labor [25.6 h]; Unskilled Labor [153.77 h]; Equipment Opreator [384.54 h]; Bobcat [25.6 h]; Roller compactor [25.6 h]; Asphalt Paver [25.6 h]; Rubber Compactor [51.29 h]; MC1/RC2 Sprinkler [25.6 h]; Dump Truck [230.77 h]; Bituminous base course (Grading I - Class A), including Prime coat (MC1) & tack coate (RC2) [937.96 m3] |
| 6185 | **RHD4-02-002-C02-(RD)-Precast Concrete Curb** | 2027-10-07 → 2028-05-03 (+209d) | 2027-10-13 → 2028-05-13 (+213d) |  |  |  |
| RHD4CZ7C02RD5100 | Supply and installation Precast Concrete Kerb for Roads - (RD-C-2)-Z7-C02-RD | 2027-10-07 → 2028-05-03 (+209d) | 2027-10-13 → 2028-05-13 (+213d) |  |  | resources Mason [170.43 h]; Skilled labor [56.85 h]; Unskilled Labor [170.43 h]; Equipment Opreator [113.7 h]; Bobcat [56.85 h]; Concrete Mixer Truck [56.85 h]; Precast Concrete Curbstone, type K1 [2348 m] → Mason [170.4 h]; Skilled labor [56.85 h]; Unskilled Labor [170.4 h]; Equipment Opreator [113.7 h]; Bobcat [56.85 h]; Concrete Mixer Truck [56.85 h]; Precast Concrete Curbstone, type K1 [2348 m] |
| 6188 | **RHD4-02-002-C02-(RD)-Traffic Signage** | 2027-11-01 → 2028-05-14 (+195d) | 2027-11-07 → 2028-05-20 (+195d) |  |  |  |
| RHD4CZ7C02RD8100 | Installation of Traffic Signage for Road Network - (RD-C-2)-Z7-C02-RD | 2027-11-01 → 2028-05-14 (+195d) | 2027-11-07 → 2028-05-20 (+195d) |  |  |  |
| 6184 | **RHD4-02-002-C02-(RD)-Bituminous concrete wearing course including tack coat (RC2)** | 2027-11-14 → 2028-05-21 (+189d) | 2027-11-15 → 2028-05-22 (+189d) |  |  |  |
| RHD4CZ7C02RD4100 | Supply, lay and compaction Asphaltic wearing course including tack Coat (RC2)for Road Network - (RD-C-2)-Z7-C02-RD | 2027-11-14 → 2028-05-21 (+189d) | 2027-11-15 → 2028-05-22 (+189d) |  |  |  |
| 6187 | **RHD4-02-002-C02-(RD)-Pavement Marking** | 2027-11-21 → 2028-05-28 (+189d) | 2027-11-23 → 2028-05-30 (+189d) |  |  |  |
| RHD4CZ7C02RD7100 | Pavement Markings for Road Network - (RD-C-2)-Z7-C02-RD | 2027-11-21 → 2028-05-28 (+189d) | 2027-11-23 → 2028-05-30 (+189d) |  |  |  |
| 6005 | **RHD4-02-002-Z7-C02-Storm Network - ST** |  | 2027-03-25 → 2027-10-26 (+215d) |  |  |  |
| 6015 | **RHD4-02-002-C02-(ST)-GRP Pipes - 1300 mm diameter** |  | 2026-08-31 → 2027-02-16 (+169d) |  |  |  |
| RHD4CZ7C02ST1109 | Excavation works for GRP Pipe Line 1300 mm - (RD-C-2)-Z7-C02-ST | 2026-08-20 A | 2026-08-22 → 2026-09-20 A (+29d) |  | 0% → 100% |  |
| RHD4CZ7C02ST1209 | Bedding works for GRP Pipe Line 1300 mm - (RD-C-2)-Z7-C02-ST | 2026-08-23 → 2027-02-08 (+169d) | 2026-08-24 → 2027-02-09 (+169d) |  |  |  |
| RHD4CZ7C02ST1309 | Installing for GRP Pipe Line 1300 mm - (RD-C-2)-Z7-C02-ST | 2026-08-25 → 2027-02-10 (+169d) | 2026-08-26 → 2027-02-11 (+169d) |  |  |  |
| RHD4CZ7C02ST1409 | Primary Test for GRP Pipe Line 1300 mm - (RD-C-2)-Z7-C02-ST | 2026-08-27 → 2027-02-13 (+170d) | 2026-08-29 → 2027-02-14 (+169d) |  |  |  |
| RHD4CZ7C02ST1509 | Backfilling and warning tape works for GRP Pipe Line 1300 mm - (RD-C-2)-Z7-C02-ST | 2026-08-30 → 2027-02-15 (+169d) | 2026-08-31 → 2027-02-16 (+169d) |  |  |  |
| 6394 | **RHD4-02-002-C02-(ST)-GRP Pipes - 1400 mm diameter** | 2026-12-28 → 2026-09-15 (-104d) | 2027-01-07 → 2027-08-01 (+206d) |  |  |  |
| RHD4CZ7C02ST1110 | Excavation works for GRP Pipe Line 1400 mm - (RD-C-2)-Z7-C02-ST | 2026-12-28 → 2026-09-15 A (-104d) | 2026-12-29 → 2026-09-20 A (-100d) |  | 0% → 100% |  |
| RHD4CZ7C02ST1210 | Bedding works for GRP Pipe Line 1400 mm - (RD-C-2)-Z7-C02-ST | 2026-12-30 → 2027-07-24 (+206d) | 2026-12-31 → 2027-07-25 (+206d) |  |  |  |
| RHD4CZ7C02ST1310 | Installing for GRP Pipe Line 1400 mm - (RD-C-2)-Z7-C02-ST | 2027-01-02 → 2027-07-26 (+205d) | 2027-01-03 → 2027-07-27 (+205d) |  |  |  |
| RHD4CZ7C02ST1410 | Primary Test for GRP Pipe Line 1400 mm - (RD-C-2)-Z7-C02-ST | 2027-01-04 → 2027-07-28 (+205d) | 2027-01-05 → 2027-07-29 (+205d) |  |  |  |
| RHD4CZ7C02ST1510 | Backfilling and warning tape works for GRP Pipe Line 1400 mm - (RD-C-2)-Z7-C02-ST | 2027-01-06 → 2027-07-31 (+206d) | 2027-01-07 → 2027-08-01 (+206d) |  |  | resources Skilled labor [11.22 h]; Unskilled Labor [22.33 h]; Equipment Opreator [22.33 h]; Excavator-Poclain [11.22 h]; Dump Truck [11.22 h]; GRP (1400mm Diameter) - ST - Depth less than 4.5 m [41.03 m] → Skilled labor [11.2 h]; Unskilled Labor [22.33 h]; Equipment Opreator [22.33 h]; Excavator-Poclain [11.2 h]; Dump Truck [11.2 h]; GRP (1400mm Diameter) - ST - Depth less than 4.5 m [41.03 m] |
| 3743 | **RHD4-02-002-C02-(ST)-GRP Pipes - 1100 mm diameter** | 2026-12-28 → 2027-07-24 (+208d) | 2027-01-11 → 2027-08-03 (+204d) |  |  |  |
| RHD4CZ7C02ST1107 | Excavation works for GRP Pipe Line 1100 mm - (RD-C-2)-Z7-C02-ST | 2026-12-28 → 2027-07-24 (+208d) | 2026-12-30 → 2027-07-25 (+207d) | 3d → 2d |  |  |
| RHD4CZ7C02ST1207 | Bedding works for GRP Pipe Line 1100 mm - (RD-C-2)-Z7-C02-ST | 2026-12-31 → 2027-07-26 (+207d) | 2027-01-02 → 2027-07-27 (+206d) |  |  |  |
| RHD4CZ7C02ST1307 | Installing for GRP Pipe Line 1100 mm - (RD-C-2)-Z7-C02-ST | 2027-01-03 → 2027-07-28 (+206d) | 2027-01-04 → 2027-07-29 (+206d) |  |  |  |
| RHD4CZ7C02ST1407 | Primary Test for GRP Pipe Line 1100 mm - (RD-C-2)-Z7-C02-ST | 2027-01-05 → 2027-07-31 (+207d) | 2027-01-07 → 2027-08-01 (+206d) | 3d → 2d |  |  |
| RHD4CZ7C02ST1507 | Backfilling and warning tape works for GRP Pipe Line 1100 mm - (RD-C-2)-Z7-C02-ST | 2027-01-09 → 2027-08-02 (+205d) | 2027-01-11 → 2027-08-03 (+204d) | 3d → 2d |  |  |
| 2039 | **RHD4-02-002-C02-(ST)-GRP Pipes - 1000 mm diameter** | 2026-12-31 → 2027-07-26 (+207d) | 2027-01-14 → 2027-08-09 (+207d) |  |  |  |
| RHD4CZ7C02ST1106 | Excavation works for GRP Pipe Line 1000 mm - (RD-C-2)-Z7-C02-ST | 2026-12-31 → 2027-07-26 (+207d) | 2027-01-02 → 2027-07-28 (+207d) | 2d → 3d |  |  |
| RHD4CZ7C02ST1206 | Bedding works for GRP Pipe Line 1000 mm - (RD-C-2)-Z7-C02-ST | 2027-01-03 → 2027-07-29 (+207d) | 2027-01-05 → 2027-08-01 (+208d) |  |  |  |
| RHD4CZ7C02ST1306 | Installing for GRP Pipe Line 1000 mm - (RD-C-2)-Z7-C02-ST | 2027-01-06 → 2027-08-02 (+208d) | 2027-01-09 → 2027-08-03 (+206d) | 3d → 2d |  |  |
| RHD4CZ7C02ST1406 | Primary Test for GRP Pipe Line 1000 mm - (RD-C-2)-Z7-C02-ST | 2027-01-10 → 2027-08-04 (+206d) | 2027-01-11 → 2027-08-05 (+206d) |  |  |  |

| ID | Task | Start | Finish | Duration | Complete | Other |
| --- | --- | --- | --- | --- | --- | --- |
| RHD4CZ7C02ST1506 | Backfilling and warning tape works for GRP Pipe Line 1000 mm - (RD-C-2)-Z7-C02-ST | 2027-01-12 → 2027-08-07 (+207d) | 2027-01-14 → 2027-08-09 (+207d) |  |  |  |
| 5254 | **RHD4-02-002-C02-(ST)-GRP Pipes - 900 mm diameter** | 2027-01-03 → 2027-07-29 (+207d) | 2027-01-14 → 2027-08-09 (+207d) |  |  |  |
| RHD4CZ7C02ST1105 | Excavation works for GRP Pipe Line 900 mm - (RD-C-2)-Z7-C02-ST | 2027-01-03 → 2027-07-29 (+207d) | 2027-01-04 → 2027-07-31 (+208d) |  |  | resources Skilled labor [4.79 h]; Unskilled Labor [4.79 h]; Equipment Opreator [5.66 h]; Excavator-Poclain [4.79 h]; Dump Truck [0.98 h]; GRP (900mm Diameter) - ST - Depth less than 1.5 m [8.71 m]; GRP (900mm Diameter) - ST - Depth: 1.51m - 2.5m → Skilled labor [4.8 h]; Unskilled Labor [4.8 h]; Equipment Opreator [5.66 h]; Excavator-Poclain [4.8 h]; Dump Truck [0.98 h]; GRP (900mm Diameter) - ST - Depth less than 1.5 m [8.71 m]; GRP (900mm Diameter) - ST - Depth: 1.51m - 2.5m |
| RHD4CZ7C02ST1205 | Bedding works for GRP Pipe Line 900 mm - (RD-C-2)-Z7-C02-ST | 2027-01-05 → 2027-08-01 (+208d) | 2027-01-06 → 2027-08-02 (+208d) |  |  | resources Skilled labor [4.79 h]; Unskilled Labor [9.47 h]; Equipment Opreator [9.47 h]; Excavator-Poclain [4.79 h]; Dump Truck [4.79 h]; GRP (900mm Diameter) - ST - Depth less than 1.5 m [4.36 m]; GRP (900mm Diameter) - ST - Depth: 1.51m - 2.5m → Skilled labor [4.8 h]; Unskilled Labor [9.47 h]; Equipment Opreator [9.47 h]; Excavator-Poclain [4.8 h]; Dump Truck [4.8 h]; GRP (900mm Diameter) - ST - Depth less than 1.5 m [4.36 m]; GRP (900mm Diameter) - ST - Depth: 1.51m - 2.5m |
| RHD4CZ7C02ST1305 | Installing for GRP Pipe Line 900 mm - (RD-C-2)-Z7-C02-ST | 2027-01-07 → 2027-08-03 (+208d) | 2027-01-09 → 2027-08-04 (+207d) |  |  |  |
| RHD4CZ7C02ST1405 | Primary Test for GRP Pipe Line 900 mm - (RD-C-2)-Z7-C02-ST | 2027-01-10 → 2027-08-05 (+207d) | 2027-01-11 → 2027-08-07 (+208d) |  |  |  |
| RHD4CZ7C02ST1505 | Backfilling and warning tape works for GRP Pipe Line 900 mm - (RD-C-2)-Z7-C02-ST | 2027-01-12 → 2027-08-08 (+208d) | 2027-01-14 → 2027-08-09 (+207d) | 3d → 2d |  | resources Skilled labor [4.79 h]; Unskilled Labor [9.47 h]; Equipment Opreator [9.47 h]; Excavator-Poclain [4.79 h]; Dump Truck [4.79 h]; GRP (900mm Diameter) - ST - Depth less than 1.5 m [17.43 m]; GRP (900mm Diameter) - ST - Depth: 1.51m - 2.5m → Skilled labor [4.8 h]; Unskilled Labor [9.47 h]; Equipment Opreator [9.47 h]; Excavator-Poclain [4.8 h]; Dump Truck [4.8 h]; GRP (900mm Diameter) - ST - Depth less than 1.5 m [17.43 m]; GRP (900mm Diameter) - ST - Depth: 1.51m - 2.5m |
| 6024 | **RHD4-02-002-C02-(ST)-MH Works - 2000 mm diameter** | 2027-01-12 → 2026-09-12 (-122d) | 2027-03-25 → 2027-10-26 (+215d) |  |  |  |
| RHD4CZ7C02ST3102 | Excavation and PC Blinding works for MH 2000 mm - (RD-C-2)-Z7-C02-ST | 2027-01-12 → 2026-09-12 A (-122d) | 2027-01-17 → 2027-08-12 (+207d) |  | 0% → 50% |  |
| RHD4CZ7C02ST3202 | Installation of Base for MH 2000 mm - (RD-C-2)-Z7-C02-ST | 2027-01-18 → 2026-09-19 A (-121d) | 2027-01-23 → 2027-08-18 (+207d) |  | 0% → 10% |  |
| RHD4CZ7C02ST3302 | MH Ring and C.Slab works and Backfilling works for MH 2000 mm - (RD-C-2)-Z7-C02-ST | 2027-01-24 → 2027-08-19 (+207d) | 2027-01-28 → 2027-08-24 (+208d) |  |  | resources Skilled labor [52.6 h]; Unskilled Labor [52.6 h]; Equipment Opreator [36.81 h]; Boom Truck [21.02 h]; Concrete Mixer Truck [15.79 h]; MH (2000mm Diameter) - ST - depth 1.50 - 2.5m [1.4 nr]; MH (2000mm Diameter) - ST - depth 2.51 - 3.5m [1.05 nr]; MH (2000mm Diameter) - ST - depth 3.51 -4.5m [1.4 nr] → Skilled labor [52.6 h]; Unskilled Labor [52.6 h]; Equipment Opreator [36.8 h]; Boom Truck [21.02 h]; Concrete Mixer Truck [15.79 h]; MH (2000mm Diameter) - ST - depth 1.50 - 2.5m [1.4 nr]; MH (2000mm Diameter) - ST - depth 2.51 - 3.5m [1.05 nr]; MH (2000mm Diameter) - ST - depth 3.51 -4.5m [1.4 nr] |
| RHD4CZ7C02ST3402 | Steel Cover for MH 2000 mm - (RD-C-2)-Z7-C02-ST | 2027-03-16 → 2027-10-17 (+215d) | 2027-03-20 → 2027-10-20 (+214d) |  |  | resources Skilled labor [39.97 h]; Unskilled Labor [79.83 h]; Equipment Opreator [7.95 h]; Boom Truck [7.95 h]; MH (2000mm Diameter) - ST - depth 1.50 - 2.5m [0.2 nr]; MH (2000mm Diameter) - ST - depth 2.51 - 3.5m [0.15 nr]; MH (2000mm Diameter) - ST - depth 3.51 -4.5m [0.2 nr] → Skilled labor [40 h]; Unskilled Labor [79.83 h]; Equipment Opreator [7.95 h]; Boom Truck [7.95 h]; MH (2000mm Diameter) - ST - depth 1.50 - 2.5m [0.2 nr]; MH (2000mm Diameter) - ST - depth 2.51 - 3.5m [0.15 nr]; MH (2000mm Diameter) - ST - depth 3.51 -4.5m [0.2 nr] |
| RHD4CZ7C02ST3502 | Finishing, Benching, Testing works for MH 2000 mm - (RD-C-2)-Z7-C02-ST | 2027-03-21 → 2027-10-21 (+214d) | 2027-03-25 → 2027-10-26 (+215d) |  |  | resources Skilled labor [47.16 h]; Unskilled Labor [94.42 h]; Plumber [47.16 h]; Equipment Opreator [9.47 h]; Water Truck [9.47 h]; MH (2000mm Diameter) - ST - depth 1.50 - 2.5m [0.4 nr]; MH (2000mm Diameter) - ST - depth 2.51 - 3.5m [0.3 nr]; MH (2000mm Diameter) - ST - depth 3.51 -4.5m [0.4 nr] → Skilled labor [47.16 h]; Unskilled Labor [94.4 h]; Plumber [47.16 h]; Equipment Opreator [9.47 h]; Water Truck [9.47 h]; MH (2000mm Diameter) - ST - depth 1.50 - 2.5m [0.4 nr]; MH (2000mm Diameter) - ST - depth 2.51 - 3.5m [0.3 nr]; MH (2000mm Diameter) - ST - depth 3.51 -4.5m [0.4 nr] |
| 6023 | **RHD4-02-002-C02-(ST)-MH Works - 1500 mm diameter** | 2027-01-18 → 2027-08-14 (+208d) | 2027-01-28 → 2027-08-30 (+214d) |  |  |  |
| RHD4CZ7C02ST3101 | Excavation and PC Blinding works for MH 1500 mm - (RD-C-2)-Z7-C02-ST | 2027-01-18 → 2027-08-14 (+208d) | 2027-01-19 → 2027-08-15 (+208d) |  |  |  |
| RHD4CZ7C02ST3201 | Installation of Base for MH 1500 mm - (RD-C-2)-Z7-C02-ST | 2027-01-20 → 2027-08-16 (+208d) | 2027-01-21 → 2027-08-17 (+208d) |  |  |  |
| RHD4CZ7C02ST3301 | MH Ring and C.Slab works and Backfilling works for MH 1500 mm - (RD-C-2)-Z7-C02-ST | 2027-01-23 → 2027-08-18 (+207d) | 2027-01-24 → 2027-08-19 (+207d) |  |  | resources Skilled labor [5.45 h]; Unskilled Labor [5.45 h]; Equipment Opreator [3.81 h]; Boom Truck [2.18 h]; Concrete Mixer Truck [1.63 h]; MH (1500mm Diameter) - ST - depth 1.50 - 2.5m [0.35 nr] → Skilled labor [5.45 h]; Unskilled Labor [5.45 h]; Equipment Opreator [3.81 h]; Boom Truck [2.18 h]; Concrete Mixer Truck [1.6 h]; MH (1500mm Diameter) - ST - depth 1.50 - 2.5m [0.35 nr] |
| RHD4CZ7C02ST3401 | Steel Cover for MH 1500 mm - (RD-C-2)-Z7-C02-ST | 2027-01-25 → 2027-08-21 (+208d) | 2027-01-26 → 2027-08-22 (+208d) |  |  | resources Skilled labor [3.59 h]; Unskilled Labor [7.3 h]; Equipment Opreator [0.76 h]; Boom Truck [0.76 h]; MH (1500mm Diameter) - ST - depth 1.50 - 2.5m [0.05 nr] → Skilled labor [3.59 h]; Unskilled Labor [7.3 h]; Equipment Opreator [0.8 h]; Boom Truck [0.8 h]; MH (1500mm Diameter) - ST - depth 1.50 - 2.5m [0.05 nr] |
| RHD4CZ7C02ST3501 | Finishing, Benching, Testing works for MH 1500 mm - (RD-C-2)-Z7-C02-ST | 2027-01-27 → 2027-08-29 (+214d) | 2027-01-28 → 2027-08-30 (+214d) |  |  |  |
| 6022 | **RHD4-02-002-C02-(ST)-MH Works - 1200 mm diameter** | 2027-01-20 → 2027-08-16 (+208d) | 2027-01-31 → 2027-09-01 (+213d) |  |  |  |
| RHD4CZ7C02ST3100 | Excavation and PC Blinding works for MH 1200 mm - (RD-C-2)-Z7-C02-ST | 2027-01-20 → 2027-08-16 (+208d) | 2027-01-21 → 2027-08-17 (+208d) |  |  |  |
| RHD4CZ7C02ST3200 | Installation of Base for MH 1200 mm - (RD-C-2)-Z7-C02-ST | 2027-01-23 → 2027-08-18 (+207d) | 2027-01-24 → 2027-08-19 (+207d) |  |  |  |
| RHD4CZ7C02ST3300 | MH Ring and C.Slab works and Backfilling works for MH 1200 mm - (RD-C-2)-Z7-C02-ST | 2027-01-25 → 2027-08-21 (+208d) | 2027-01-26 → 2027-08-22 (+208d) |  |  |  |
| RHD4CZ7C02ST3400 | Steel Cover for MH 1200 mm - (RD-C-2)-Z7-C02-ST | 2027-01-27 → 2027-08-29 (+214d) | 2027-01-28 → 2027-08-30 (+214d) |  |  |  |
| RHD4CZ7C02ST3500 | Finishing, Benching, Testing works for MH 1200 mm - (RD-C-2)-Z7-C02-ST | 2027-01-30 → 2027-08-31 (+213d) | 2027-01-31 → 2027-09-01 (+213d) |  |  |  |
| 6014 | **RHD4-02-002-C02-(ST)-GRP Pipes - 1200 mm diameter** | 2026-08-23 → 2027-02-08 (+169d) | 2027-01-17 → 2027-08-11 (+206d) |  |  |  |
| RHD4CZ7C02ST1108 | Excavation works for GRP Pipe Line 1200 mm - (RD-C-2)-Z7-C02-ST | 2026-08-23 → 2027-02-08 (+169d) | 2026-08-24 → 2027-02-09 (+169d) |  |  |  |
| RHD4CZ7C02ST1208 | Bedding works for GRP Pipe Line 1200 mm - (RD-C-2)-Z7-C02-ST | 2026-08-25 → 2027-02-10 (+169d) | 2026-08-26 → 2027-02-11 (+169d) |  |  |  |
| RHD4CZ7C02ST1308 | Installing for GRP Pipe Line 1200 mm - (RD-C-2)-Z7-C02-ST | 2026-08-27 → 2027-02-13 (+170d) | 2026-08-29 → 2027-02-14 (+169d) |  |  |  |
| RHD4CZ7C02ST1408 | Primary Test for GRP Pipe Line 1200 mm - (RD-C-2)-Z7-C02-ST | 2026-08-30 → 2027-02-15 (+169d) | 2026-08-31 → 2027-02-16 (+169d) |  |  |  |
| RHD4CZ7C02ST1508 | Backfilling and warning tape works for GRP Pipe Line 1200 mm - (RD-C-2)-Z7-C02-ST | 2027-01-16 → 2027-08-10 (+206d) | 2027-01-17 → 2027-08-11 (+206d) |  |  |  |
| 6007 | **RHD4-02-002-C02-(ST)-GRP Pipes - 500 mm diameter** | 2027-01-05 → 2027-08-01 (+208d) | 2027-01-16 → 2027-08-11 (+207d) |  |  |  |
| RHD4CZ7C02ST1101 | Excavation works for GRP Pipe Line 500 mm - (RD-C-2)-Z7-C02-ST | 2027-01-05 → 2027-08-01 (+208d) | 2027-01-06 → 2027-08-02 (+208d) |  |  | resources Skilled labor [8.28 h]; Unskilled Labor [8.28 h]; Equipment Opreator [9.91 h]; Excavator-Poclain [8.28 h]; Dump Truck [1.63 h]; GRP (500mm Diameter) - ST - Depth less than 1.5 m [17.06 m]; GRP (500mm Diameter) - ST - Depth: 1.51m - 2.5m → Skilled labor [8.28 h]; Unskilled Labor [8.28 h]; Equipment Opreator [9.91 h]; Excavator-Poclain [8.28 h]; Dump Truck [1.6 h]; GRP (500mm Diameter) - ST - Depth less than 1.5 m [17.06 m]; GRP (500mm Diameter) - ST - Depth: 1.51m - 2.5m |
| RHD4CZ7C02ST1201 | Bedding works for GRP Pipe Line 500 mm - (RD-C-2)-Z7-C02-ST | 2027-01-07 → 2027-08-03 (+208d) | 2027-01-09 → 2027-08-04 (+207d) |  |  |  |
| RHD4CZ7C02ST1301 | Installing for GRP Pipe Line 500 mm - (RD-C-2)-Z7-C02-ST | 2027-01-10 → 2027-08-05 (+207d) | 2027-01-11 → 2027-08-07 (+208d) |  |  |  |
| RHD4CZ7C02ST1401 | Primary Test for GRP Pipe Line 500 mm - (RD-C-2)-Z7-C02-ST | 2027-01-12 → 2027-08-08 (+208d) | 2027-01-13 → 2027-08-09 (+208d) |  |  |  |
| RHD4CZ7C02ST1501 | Backfilling and warning tape works for GRP Pipe Line 500 mm - (RD-C-2)-Z7-C02-ST | 2027-01-14 → 2027-08-10 (+208d) | 2027-01-16 → 2027-08-11 (+207d) |  |  |  |
| 6006 | **RHD4-02-002-C02-(ST)-GRP Pipes - 400 mm diameter** | 2027-01-07 → 2027-08-03 (+208d) | 2027-01-18 → 2027-08-14 (+208d) |  |  |  |
| RHD4CZ7C02ST1100 | Excavation works for GRP Pipe Line 400 mm - (RD-C-2)-Z7-C02-ST | 2027-01-07 → 2027-08-03 (+208d) | 2027-01-09 → 2027-08-04 (+207d) |  |  |  |
| RHD4CZ7C02ST1200 | Bedding works for GRP Pipe Line 400 mm - (RD-C-2)-Z7-C02-ST | 2027-01-10 → 2027-08-05 (+207d) | 2027-01-11 → 2027-08-07 (+208d) |  |  |  |
| RHD4CZ7C02ST1300 | Installing for GRP Pipe Line 400 mm - (RD-C-2)-Z7-C02-ST | 2027-01-12 → 2027-08-08 (+208d) | 2027-01-13 → 2027-08-09 (+208d) |  |  |  |
| RHD4CZ7C02ST1400 | Primary Test for GRP Pipe Line 400 mm - (RD-C-2)-Z7-C02-ST | 2027-01-14 → 2027-08-10 (+208d) | 2027-01-16 → 2027-08-11 (+207d) |  |  |  |
| RHD4CZ7C02ST1500 | Backfilling and warning tape works for GRP Pipe Line 400 mm - (RD-C-2)-Z7-C02-ST | 2027-01-17 → 2027-08-12 (+207d) | 2027-01-18 → 2027-08-14 (+208d) |  |  |  |
| 6020 | **RHD4-02-002-C02-(ST)-UPVC Pipes - 300 mm diameter** | 2027-01-10 → 2026-08-25 (-138d) | 2027-01-20 → 2027-08-28 (+220d) |  |  |  |
| RHD4CZ7C02ST2100 | Excavation works for UPVC Pipe Line 300 mm - (RD-C-2)-Z7-C02-ST | 2027-01-10 → 2026-08-25 A (-138d) | 2027-01-11 → 2027-08-10 (+211d) |  | 0% → 5% |  |
| RHD4CZ7C02ST2200 | Bedding works for UPVC Pipe Line 300 mm - (RD-C-2)-Z7-C02-ST | 2027-01-12 → 2026-08-29 A (-136d) | 2027-01-13 → 2027-08-15 (+214d) |  | 0% → 6% |  |
| RHD4CZ7C02ST2300 | Installing for UPVC Pipe Line 300 mm - (RD-C-2)-Z7-C02-ST | 2027-01-14 → 2026-09-02 A (-134d) | 2027-01-16 → 2027-08-21 (+217d) |  | 0% → 4% |  |
| RHD4CZ7C02ST2500 | Backfilling and warning tape works for UPVC Pipe Line 300 mm - (RD-C-2)-Z7-C02-ST | 2027-01-19 → 2026-09-19 A (-122d) | 2027-01-20 → 2027-08-28 (+220d) |  | 0% → 4% |  |
| RHD4CZ7C02ST2400 | Primary Test for UPVC Pipe Line 300 mm - (RD-C-2)-Z7-C02-ST | 2027-01-17 → 2027-08-22 (+217d) | 2027-01-18 → 2027-08-24 (+218d) | 2d → 3d |  |  |
| 6028 | **RHD4-02-002-C02-(ST)-Concrete Encasement** | 2027-01-14 → 2027-08-19 (+217d) | 2027-01-16 → 2027-08-21 (+217d) |  |  |  |
| RHD4CZ7C02ST6100 | Pipe Encasement for Storm Pipelines - (RD-C-2)-Z7-C02-ST | 2027-01-14 → 2027-08-19 (+217d) | 2027-01-16 → 2027-08-21 (+217d) |  |  |  |
| 6029 | **RHD4-02-002-Z7-C02-Catch Basin - ST** | 2027-01-27 → 2026-09-19 (-130d) | 2027-04-03 → 2027-11-03 (+214d) |  |  |  |
| 6030 | **RHD4-02-002-C02-(ST)-Single Catch Basin Works** | 2027-01-27 → 2026-09-19 (-130d) | 2027-03-31 → 2027-11-01 (+215d) |  |  |  |
| RHD4CZ7C02ST7100 | Excavation works for Single Catch Basin - (RD-C-2)-Z7-C02-ST | 2027-01-27 → 2026-09-19 A (-130d) | 2027-02-01 → 2027-08-28 (+208d) |  | 0% → 5% |  |
| RHD4CZ7C02ST7200 | PC Blinding, Installation and Pipe connection for Single Catch Basin - (RD-C-2)-Z7-C02-ST | 2027-02-02 → 2026-09-21 A (-134d) | 2027-02-07 → 2027-09-02 (+207d) |  | 0% → 5% |  |
| RHD4CZ7C02ST7300 | Rings & C.Slab & Final Backfill for Single Catch Basin - (RD-C-2)-Z7-C02-ST | 2027-02-08 → 2026-09-22 A (-139d) | 2027-02-14 → 2027-09-09 (+207d) |  | 0% → 5% |  |
| RHD4CZ7C02ST7400 | Steel Cover for Single Catch Basin - (RD-C-2)-Z7-C02-ST | 2027-03-16 → 2027-10-17 (+215d) | 2027-03-21 → 2027-10-21 (+214d) |  |  |  |
| RHD4CZ7C02ST7500 | Finishing and Insulation works for Single Catch Basin - (RD-C-2)-Z7-C02-ST | 2027-03-22 → 2027-10-23 (+215d) | 2027-03-31 → 2027-11-01 (+215d) |  |  |  |
| 6031 | **RHD4-02-002-C02-(ST)-Double Catch Basin Works** | 2027-01-27 → 2027-08-23 (+208d) | 2027-04-03 → 2027-11-03 (+214d) |  |  |  |
| RHD4CZ7C02ST8100 | Excavation works for Double Catch Basin - (RD-C-2)-Z7-C02-ST | 2027-01-27 → 2027-08-23 (+208d) | 2027-01-28 → 2027-08-24 (+208d) |  |  |  |
| RHD4CZ7C02ST8200 | PC Blinding, Installation and Pipe connection for Double Catch Basin - (RD-C-2)-Z7-C02-ST | 2027-02-08 → 2027-09-04 (+208d) | 2027-02-09 → 2027-09-05 (+208d) |  |  |  |
| RHD4CZ7C02ST8300 | Rings & C.Slab & Final Backfillfor Double Catch Basin - (RD-C-2)-Z7-C02-ST | 2027-02-15 → 2027-09-11 (+208d) | 2027-02-16 → 2027-09-12 (+208d) |  |  | resources Skilled labor [8.17 h]; Unskilled Labor [16.34 h]; Equipment Opreator [9.8 h]; Boom Truck [1.63 h]; Bobcat [8.17 h]; Double Catch basin - ST [1.05 nr] → Skilled labor [8.17 h]; Unskilled Labor [16.34 h]; Equipment Opreator [9.8 h]; Boom Truck [1.6 h]; Bobcat [8.17 h]; Double Catch basin - ST [1.05 nr] |
| RHD4CZ7C02ST8400 | Steel Cover for Double Catch Basin - (RD-C-2)-Z7-C02-ST | 2027-03-22 → 2027-10-23 (+215d) | 2027-03-23 → 2027-10-24 (+215d) |  |  |  |
| RHD4CZ7C02ST8500 | Finishing and Insulation works for Double Catch Basin - (RD-C-2)-Z7-C02-ST | 2027-04-01 → 2027-11-02 (+215d) | 2027-04-03 → 2027-11-03 (+214d) |  |  |  |
| 3973 | **RHD4-02-002-Z7-C02-Sewage Network - SW** | 2027-01-21 → 2026-09-15 (-128d) | 2027-02-07 → 2027-09-11 (+216d) |  |  |  |
| 3785 | **RHD4-02-002-C02-(SW)-GRP Pipes - 300 mm diameter** | 2027-01-21 → 2026-09-15 (-128d) | 2027-02-01 → 2027-09-07 (+218d) |  |  |  |
| RHD4CZ7C02SW1100 | Excavation works for GRP Pipe Line 300 mm - (RD-C-2)-Z7-C02-SW | 2027-01-21 → 2026-09-15 A (-128d) | 2027-01-23 → 2027-08-29 (+218d) |  | 0% → 42% |  |
| RHD4CZ7C02SW1200 | Bedding works for GRP Pipe Line 300 mm - (RD-C-2)-Z7-C02-SW | 2027-01-24 → 2027-08-30 (+218d) | 2027-01-25 → 2027-08-31 (+218d) |  |  |  |
| RHD4CZ7C02SW1300 | Installing for GRP Pipe Line 300 mm - (RD-C-2)-Z7-C02-SW | 2027-01-26 → 2027-09-01 (+218d) | 2027-01-27 → 2027-09-02 (+218d) |  |  |  |
| RHD4CZ7C02SW1400 | Primary Test for GRP Pipe Line 300 mm - (RD-C-2)-Z7-C02-SW | 2027-01-28 → 2027-09-04 (+219d) | 2027-01-30 → 2027-09-05 (+218d) |  |  |  |

| ID | Task | Start | Finish | Duration | Complete | Other |
| --- | --- | --- | --- | --- | --- | --- |
| RHD4CZ7C02SW1500 | Backfilling and warning tape works for GRP Pipe Line 300 mm - (RD-C-2)-Z7-C02-SW | 2027-01-31 → 2027-09-06 (+218d) | 2027-02-01 → 2027-09-07 (+218d) |  |  |  |
| 3794 | **RHD4-02-002-C02-(SW)-MH Works - 1200 mm diameter** | 2027-01-24 → 2026-09-20 (-126d) | 2027-02-07 → 2027-09-11 (+216d) |  |  |  |
| RHD4CZ7C02SW3100 | Excavation and PC Blinding works for MH 1200 mm - (RD-C-2)-Z7-C02-SW | 2027-01-24 → 2026-09-20 A (-126d) | 2027-01-25 → 2026-10-20 A (-97d) |  | 0% → 100% | resources Skilled labor [16.34 h]; Unskilled Labor [16.34 h]; Equipment Opreator [26.14 h]; Excavator-Poclain [16.34 h]; Water Truck [1.63 h]; Dump Truck [8.17 h]; MH (1200mm Diameter) - SW - depth 3.51 -4.5m [0.75 nr] → Skilled labor [16.34 h]; Unskilled Labor [16.34 h]; Equipment Opreator [26.14 h]; Excavator-Poclain [16.34 h]; Water Truck [1.6 h]; Dump Truck [8.17 h]; MH (1200mm Diameter) - SW - depth 3.51 -4.5m [0.75 nr] |
| RHD4CZ7C02SW3200 | Installation of Base for MH 1200 mm - (RD-C-2)-Z7-C02-SW | 2027-01-26 → 2027-08-30 (+216d) | 2027-01-28 → 2027-09-01 (+216d) |  |  |  |
| RHD4CZ7C02SW3300 | MH Ring and C.Slab works and Backfilling works for MH 1200 mm - (RD-C-2)-Z7-C02-SW | 2027-01-30 → 2027-09-02 (+215d) | 2027-02-01 → 2027-09-05 (+216d) |  |  |  |
| RHD4CZ7C02SW3400 | Steel Cover for MH 1200 mm - (RD-C-2)-Z7-C02-SW | 2027-02-02 → 2027-09-06 (+216d) | 2027-02-03 → 2027-09-07 (+216d) |  |  |  |
| RHD4CZ7C02SW3500 | Finishing, Benching, Testing works for MH 1200 mm - (RD-C-2)-Z7-C02-SW | 2027-02-04 → 2027-09-08 (+216d) | 2027-02-07 → 2027-09-11 (+216d) |  |  |  |
| 4299 | **RHD4-02-002-Z7-C02-Concrete Box Culvert - ST** |  | 2026-05-07 → 2026-12-01 (+208d) |  |  |  |
| 4300 | **RHD4-02-002-C02-(ST)-Concrete Box Culvert** |  | 2026-05-07 → 2026-12-01 (+208d) |  |  |  |
| RHD4CZ7C02ST4100 | Excavation works for Box Culvert - (RD-C-2)-Z7-C02-ST(Completed) | 2026-01-29 A | 2026-03-26 → 2026-07-07 A (+103d) |  | 0% → 100% |  |
| RHD4CZ7C02ST4200 | PC works for Box Culvert - (RD-C-2)-Z7-C02-ST(Completed) | 2026-01-29 A | 2026-03-23 → 2026-06-18 A (+87d) |  | 0% → 100% |  |
| RHD4CZ7C02ST4400 | Raft works for Box Culvert - (RD-C-2)-Z7-C02-ST(Completed) | 2026-01-29 A | 2026-02-23 → 2026-07-16 A (+143d) |  | 0% → 100% | resources Carpenter [18.84 h]; Skilled labor [22.76 h]; Steel Fixer [3.92 h]; Equipment Opreator [38.44 h]; Boom Truck [0.76 h]; Concrete Mixer Truck [18.84 h]; Concrete Pump [18.84 h]; Supply and cast in place reinforced concrete for Box culverts - ST [372.62 m3]; Supply, placing, and fixing of high tensile reinforcement steel for Box culverts - ST [77.79 Ton] → Carpenter [18.84 h]; Skilled labor [22.76 h]; Steel Fixer [3.92 h]; Equipment Opreator [38.44 h]; Boom Truck [0.8 h]; Concrete Mixer Truck [18.84 h]; Concrete Pump [18.84 h]; Supply and cast in place reinforced concrete for Box culverts - ST [372.62 m3]; Supply, placing, and fixing of high tensile reinforcement steel for Box culverts - ST [77.79 Ton] |
| RHD4CZ7C02ST4500 | Wall and slab works for Box Culvert - (RD-C-2)-Z7-C02-ST | 2026-03-28 → 2026-08-04 A (+129d) | 2026-04-02 → 2026-09-30 A (+181d) |  | 0% → 100% |  |
| RHD4CZ7C02ST4600 | Insulation and Testing for Box Culvert - (RD-C-2)-Z7-C02-ST | 2026-05-03 → 2026-10-03 A (+153d) | 2026-05-07 → 2026-10-07 A (+153d) |  | 0% → 100% |  |
| RHD4CZ7C02ST4700 | Backfilling works for Box Culvert - (RD-C-2)-Z7-C02-ST | 2026-04-11 → 2026-11-10 (+213d) | 2026-05-02 → 2026-12-01 (+213d) |  |  |  |
| 4301 | **RHD4-02-002-C02-(ST)-Concrete Chambers** | 2026-04-04 → 2026-10-01 (+180d) | 2026-04-12 → 2026-11-11 (+213d) |  |  |  |
| RHD4CZ7C02ST5100 | Excavation and Bedding for Concrete Chambers - for Box Culvert - (RD-C-2)-Z7-C02-ST | 2026-04-04 → 2026-10-01 A (+180d) | 2026-04-05 → 2026-11-04 (+213d) |  | 0% → 50% |  |
| RHD4CZ7C02ST5200 | PC works for Concrete Chambers - for Box Culvert - (RD-C-2)-Z7-C02-ST | 2026-04-06 → 2026-10-04 A (+181d) | 2026-04-07 → 2026-11-07 (+214d) |  | 0% → 50% |  |
| RHD4CZ7C02ST5300 | Installation for Concrete Chambers - for Box Culvert - (RD-C-2)-Z7-C02-ST | 2026-04-08 → 2026-10-06 A (+181d) | 2026-04-09 → 2026-11-09 (+214d) |  | 0% → 50% |  |
| RHD4CZ7C02ST5400 | Backfilling works for Concrete Chambers - for Box Culvert - (RD-C-2)-Z7-C02-ST | 2026-04-11 → 2026-11-10 (+213d) | 2026-04-12 → 2026-11-11 (+213d) |  |  |  |
| 6091 | **RHD4-02-002-Z7-C02-Potable Network - PT** | 2027-02-02 → 2027-09-08 (+218d) | 2027-03-28 → 2027-10-23 (+209d) |  |  |  |
| 6093 | **RHD4-02-002-C02-(PT)-HDPE Pipes - 160 mm diameter** | 2027-02-02 → 2027-09-08 (+218d) | 2027-02-28 → 2027-10-04 (+218d) |  |  |  |
| RHD4CZ7C02PT1101 | Excavation works for HDPE Pipline 160 mm - (RD-C-2)-Z7-C02-PT | 2027-02-02 → 2027-09-08 (+218d) | 2027-02-06 → 2027-09-12 (+218d) |  |  |  |
| RHD4CZ7C02PT1201 | Bedding works for HDPE Pipline 160 mm - (RD-C-2)-Z7-C02-PT | 2027-02-07 → 2027-09-13 (+218d) | 2027-02-10 → 2027-09-16 (+218d) |  |  |  |
| RHD4CZ7C02PT1301 | Installing for HDPE Pipline 160 mm - (RD-C-2)-Z7-C02-PT | 2027-02-11 → 2027-09-18 (+219d) | 2027-02-17 → 2027-09-25 (+220d) |  |  |  |
| RHD4CZ7C02PT1401 | Primary Test for HDPE Pipline 160 mm - (RD-C-2)-Z7-C02-PT | 2027-02-18 → 2027-09-26 (+220d) | 2027-02-21 → 2027-09-28 (+219d) |  |  |  |
| RHD4CZ7C02PT1501 | Backfilling and warning tape works for HDPE Pipline 160 mm - (RD-C-2)-Z7-C02-PT | 2027-02-23 → 2027-09-29 (+218d) | 2027-02-28 → 2027-10-04 (+218d) |  |  |  |
| 4969 | **RHD4-02-002-C02-(PT)-Fire Hydrant** | 2027-03-01 → 2027-10-05 (+218d) | 2027-03-16 → 2027-10-17 (+215d) |  |  |  |
| RHD4CZ7C02PT4100 | Excavation and Bedding and Pipe Installation for Fire Hydrant - (RD-C-2)-Z7-C02-PT | 2027-03-01 → 2027-10-05 (+218d) | 2027-03-03 → 2027-10-07 (+218d) |  |  | resources Skilled labor [27.23 h]; Unskilled Labor [27.23 h]; Plumber [27.23 h]; Equipment Opreator [13.61 h]; Excavator-Poclain [13.61 h]; 3-outlet fire hydrant (2 x 2.5 inch and 1 x 4.5 inch) in the form of a separate dry vacuum cylinder [0.5 nr] → Skilled labor [27.2 h]; Unskilled Labor [27.2 h]; Plumber [27.2 h]; Equipment Opreator [13.6 h]; Excavator-Poclain [13.6 h]; 3-outlet fire hydrant (2 x 2.5 inch and 1 x 4.5 inch) in the form of a separate dry vacuum cylinder [0.5 nr] |
| RHD4CZ7C02PT4200 | Valve Installation for Fire Hydrant - (RD-C-2)-Z7-C02-PT | 2027-03-04 → 2027-10-09 (+219d) | 2027-03-06 → 2027-10-10 (+218d) |  |  |  |
| RHD4CZ7C02PT4300 | Stem for Fire Hydrant - (RD-C-2)-Z7-C02-PT | 2027-03-07 → 2027-10-11 (+218d) | 2027-03-08 → 2027-10-12 (+218d) |  |  |  |
| RHD4CZ7C02PT4400 | Fire Installation for Fire Hydrant - (RD-C-2)-Z7-C02-PT | 2027-03-13 → 2027-10-13 (+214d) | 2027-03-14 → 2027-10-14 (+214d) |  |  |  |
| RHD4CZ7C02PT4500 | Protection Barriers for Fire Hydrant - (RD-C-2)-Z7-C02-PT | 2027-03-15 → 2027-10-16 (+215d) | 2027-03-16 → 2027-10-17 (+215d) |  |  |  |
| 6100 | **RHD4-02-002-C02-(PT)-Wash out Valve Chambers** | 2027-03-01 → 2027-10-05 (+218d) | 2027-03-13 → 2027-10-13 (+214d) |  |  |  |
| RHD4CZ7C02PT2101 | Excavation and Bedding for Wash out Valve Chambers for Potable Water Network - (RD-C-2)-Z7-C02-PT | 2027-03-01 → 2027-10-05 (+218d) | 2027-03-02 → 2027-10-06 (+218d) |  |  |  |
| RHD4CZ7C02PT2201 | PC works for Wash out Valve Chambers for Potable Water Network - (RD-C-2)-Z7-C02-PT | 2027-03-03 → 2027-10-07 (+218d) | 2027-03-04 → 2027-10-09 (+219d) |  |  |  |
| RHD4CZ7C02PT2301 | Installation for Wash out Valve Chambers for Potable Water Network - (RD-C-2)-Z7-C02-PT | 2027-03-06 → 2027-10-10 (+218d) | 2027-03-07 → 2027-10-11 (+218d) |  |  |  |
| RHD4CZ7C02PT2401 | Backfilling works for Wash out Valve Chambers for Potable Water Network - (RD-C-2)-Z7-C02-PT | 2027-03-08 → 2027-10-12 (+218d) | 2027-03-13 → 2027-10-13 (+214d) |  |  |  |
| 6101 | **RHD4-02-002-C02-(PT)-Wash out Valves** | 2027-03-08 → 2027-10-12 (+218d) | 2027-03-15 → 2027-10-16 (+215d) |  |  |  |
| RHD4CZ7C02PT3102 | Installation for Wash out Valves for Potable Water Network - (RD-C-2)-Z7-C02-PT | 2027-03-08 → 2027-10-12 (+218d) | 2027-03-13 → 2027-10-13 (+214d) |  |  |  |
| RHD4CZ7C02PT3202 | Stem and Service box for Wash out Valves for Potable Water Network - (RD-C-2)-Z7-C02-PT | 2027-03-14 → 2027-10-14 (+214d) | 2027-03-15 → 2027-10-16 (+215d) |  |  |  |
| 6102 | **RHD4-02-002-C02-(PT)-Air Valve Chambers** | 2027-03-01 → 2027-10-05 (+218d) | 2027-03-13 → 2027-10-13 (+214d) |  |  |  |
| RHD4CZ7C02PT2102 | Excavation and Bedding for Air Valve Chambers for Potable Water Network - (RD-C-2)-Z7-C02-PT | 2027-03-01 → 2027-10-05 (+218d) | 2027-03-02 → 2027-10-06 (+218d) |  |  |  |
| RHD4CZ7C02PT2202 | PC works for Air Valve Chambers for Potable Water Network - (RD-C-2)-Z7-C02-PT | 2027-03-03 → 2027-10-07 (+218d) | 2027-03-04 → 2027-10-09 (+219d) |  |  |  |
| RHD4CZ7C02PT2302 | Installation for Air Valve Chambers for Potable Water Network - (RD-C-2)-Z7-C02-PT | 2027-03-06 → 2027-10-10 (+218d) | 2027-03-07 → 2027-10-11 (+218d) |  |  |  |
| RHD4CZ7C02PT2402 | Backfilling works for Air Valve Chambers for Potable Water Network - (RD-C-2)-Z7-C02-PT | 2027-03-08 → 2027-10-12 (+218d) | 2027-03-13 → 2027-10-13 (+214d) |  |  |  |
| 6103 | **RHD4-02-002-C02-(PT)-Air Valves** | 2027-03-08 → 2027-10-12 (+218d) | 2027-03-15 → 2027-10-16 (+215d) |  |  |  |
| RHD4CZ7C02PT3103 | Installation for Air Valves for Potable Water Network - (RD-C-2)-Z7-C02-PT | 2027-03-08 → 2027-10-12 (+218d) | 2027-03-13 → 2027-10-13 (+214d) |  |  |  |
| RHD4CZ7C02PT3203 | Stem and Service box for Air Valves for Potable Water Network - (RD-C-2)-Z7-C02-PT | 2027-03-14 → 2027-10-14 (+214d) | 2027-03-15 → 2027-10-16 (+215d) |  |  |  |
| 6097 | **RHD4-02-002-C02-(PT)-Gate Valves (Direct Buried)** | 2027-03-16 → 2027-10-17 (+215d) | 2027-03-28 → 2027-10-23 (+209d) |  |  |  |
| RHD4CZ7C02PT3100 | Installation for Direct Buried Gate Valves - (RD-C-2)-Z7-C02-PT | 2027-03-16 → 2027-10-17 (+215d) | 2027-03-18 → 2027-10-19 (+215d) |  |  | resources Unskilled Labor [27.23 h]; Plumber [27.23 h]; Gate valves dia 150 mm - PT [4.5 nr] → Unskilled Labor [27.2 h]; Plumber [27.2 h]; Gate valves dia 150 mm - PT [4.5 nr] |
| RHD4CZ7C02PT3200 | Stem and Service box for Direct Buried Gate Valves - (RD-C-2)-Z7-C02-PT | 2027-03-20 → 2027-10-20 (+214d) | 2027-03-28 → 2027-10-23 (+209d) | 8d → 3d |  | resources Unskilled Labor [27.23 h]; Plumber [27.23 h]; Gate valves dia 150 mm - PT [0.5 nr] → Unskilled Labor [27.2 h]; Plumber [27.2 h]; Gate valves dia 150 mm - PT [0.5 nr] |
| 6106 | **RHD4-02-002-Z7-C02-Irrigation Network - IRR** | 2027-03-29 → 2027-10-24 (+209d) | 2027-04-20 → 2027-11-15 (+209d) |  |  |  |
| 6107 | **RHD4-02-002-C02-(IRR)-HDPE Pipes - 160 mm diameter** | 2027-04-04 → 2027-10-30 (+209d) | 2027-04-14 → 2027-11-09 (+209d) |  |  |  |
| RHD4CZ7C02IRR1100 | Excavation works for HDPE Pipline 160 mm - (RD-C-2)-Z7-C02-IRR | 2027-04-04 → 2027-10-30 (+209d) | 2027-04-05 → 2027-10-31 (+209d) |  |  | resources Skilled labor [4.03 h]; Unskilled Labor [4.03 h]; Equipment Opreator [4.9 h]; Excavator-Poclain [4.03 h]; Dump Truck [0.76 h]; HDPE (160mm Diameter) - TSE - Depth: less than 1.5m [5.6 m] → Skilled labor [4 h]; Unskilled Labor [4 h]; Equipment Opreator [4.9 h]; Excavator-Poclain [4 h]; Dump Truck [0.8 h]; HDPE (160mm Diameter) - TSE - Depth: less than 1.5m [5.6 m] |
| RHD4CZ7C02IRR1200 | Bedding works for HDPE Pipline 160 mm - (RD-C-2)-Z7-C02-IRR | 2027-04-06 → 2027-11-01 (+209d) | 2027-04-07 → 2027-11-02 (+209d) |  |  |  |
| RHD4CZ7C02IRR1300 | Installing for HDPE Pipline 160 mm - (RD-C-2)-Z7-C02-IRR | 2027-04-08 → 2027-11-03 (+209d) | 2027-04-10 → 2027-11-04 (+208d) |  |  | resources Unskilled Labor [8.17 h]; Plumber [4.03 h]; Equipment Opreator [4.03 h]; Boom Truck [4.03 h]; HDPE (160mm Diameter) - TSE - Depth: less than 1.5m [25.2 m] → Unskilled Labor [8.17 h]; Plumber [4 h]; Equipment Opreator [4 h]; Boom Truck [4 h]; HDPE (160mm Diameter) - TSE - Depth: less than 1.5m [25.2 m] |
| RHD4CZ7C02IRR1400 | Primary Test for HDPE Pipline 160 mm - (RD-C-2)-Z7-C02-IRR | 2027-04-11 → 2027-11-06 (+209d) | 2027-04-12 → 2027-11-07 (+209d) |  |  |  |
| RHD4CZ7C02IRR1500 | Backfilling and warning tape works for HDPE Pipline 160 mm - (RD-C-2)-Z7-C02-IRR | 2027-04-13 → 2027-11-08 (+209d) | 2027-04-14 → 2027-11-09 (+209d) |  |  |  |
| 6111 | **RHD4-02-002-C02-(IRR)-HDPE Pipes - 315 mm diameter** | 2027-03-29 → 2027-10-24 (+209d) | 2027-04-20 → 2027-11-15 (+209d) |  |  |  |
| RHD4CZ7C02IRR1104 | Excavation works for HDPE Pipline 315 mm - (RD-C-2)-Z7-C02-IRR | 2027-03-29 → 2027-10-24 (+209d) | 2027-04-03 → 2027-10-28 (+208d) |  |  |  |
| RHD4CZ7C02IRR1204 | Bedding works for HDPE Pipline 315 mm - (RD-C-2)-Z7-C02-IRR | 2027-04-04 → 2027-10-30 (+209d) | 2027-04-07 → 2027-11-02 (+209d) |  |  |  |
| RHD4CZ7C02IRR1304 | Installing for HDPE Pipline 315 mm - (RD-C-2)-Z7-C02-IRR | 2027-04-08 → 2027-11-03 (+209d) | 2027-04-13 → 2027-11-08 (+209d) |  |  |  |
| RHD4CZ7C02IRR1404 | Primary Test for HDPE Pipline 315 mm - (RD-C-2)-Z7-C02-IRR | 2027-04-14 → 2027-11-09 (+209d) | 2027-04-15 → 2027-11-10 (+209d) |  |  |  |
| RHD4CZ7C02IRR1504 | Backfilling and warning tape works for HDPE Pipline 315 mm - (RD-C-2)-Z7-C02-IRR | 2027-04-17 → 2027-11-11 (+208d) | 2027-04-20 → 2027-11-15 (+209d) |  |  |  |
| 6115 | **RHD4-02-002-C02-(IRR)-Gate Valves (Direct Buried)** | 2027-04-12 → 2027-11-07 (+209d) | 2027-04-17 → 2027-11-11 (+208d) |  |  |  |
| RHD4CZ7C02IRR3100 | Installation for Direct Buried Gate Valves - (RD-C-2)-Z7-C02-IRR | 2027-04-12 → 2027-11-07 (+209d) | 2027-04-13 → 2027-11-08 (+209d) |  |  |  |
| RHD4CZ7C02IRR3200 | Stem and Service box for Direct Buried Gate Valves - (RD-C-2)-Z7-C02-IRR | 2027-04-15 → 2027-11-10 (+209d) | 2027-04-17 → 2027-11-11 (+208d) |  |  |  |
| 6116 | **RHD4-02-002-C02-(IRR)-Butterfly Valve Chamber** | 2027-04-06 → 2027-11-01 (+209d) | 2027-04-15 → 2027-11-10 (+209d) |  |  |  |
| RHD4CZ7C02IRR2100 | Excavation and Bedding for Butterfly Valve Chamber for Irrigation Network - (RD-C-2)-Z7-C02-IRR | 2027-04-06 → 2027-11-01 (+209d) | 2027-04-07 → 2027-11-02 (+209d) |  |  | resources Skilled labor [16.34 h]; Unskilled Labor [16.34 h]; Equipment Opreator [3.27 h]; Excavator-Poclain [1.63 h]; Dump Truck [1.63 h]; Valve chambers - TSE [0.75 nr] → Skilled labor [16.34 h]; Unskilled Labor [16.34 h]; Equipment Opreator [3.27 h]; Excavator-Poclain [1.6 h]; Dump Truck [1.6 h]; Valve chambers - TSE [0.75 nr] |

| ID | Task | Start | Finish | Duration | Other |
| --- | --- | --- | --- | --- | --- |
| RHD4CZ7C02IRR2200 | PC works for Butterfly Valve Chamber for Irrigation Network - (RD-C-2)-Z7-C02-IRR | 2027-04-08 → 2027-11-03 (+209d) | 2027-04-10 → 2027-11-04 (+208d) |  | resources Skilled labor [16.34 h]; Unskilled Labor [32.67 h]; Equipment Opreator [1.63 h]; Concrete Pump [1.63 h]; Valve chambers - TSE [0.3 nr] → Skilled labor [16.34 h]; Unskilled Labor [32.67 h]; Equipment Opreator [1.6 h]; Concrete Pump [1.6 h]; Valve chambers - TSE [0.3 nr] |
| RHD4CZ7C02IRR2300 | Installation for Butterfly Valve Chamber for Irrigation Network - (RD-C-2)-Z7-C02-IRR | 2027-04-11 → 2027-11-06 (+209d) | 2027-04-12 → 2027-11-07 (+209d) |  |  |
| RHD4CZ7C02IRR2400 | Backfilling works for Butterfly Valve Chamber for Irrigation Network - (RD-C-2)-Z7-C02-IRR | 2027-04-13 → 2027-11-08 (+209d) | 2027-04-15 → 2027-11-10 (+209d) |  | resources Skilled labor [16.34 h]; Unskilled Labor [32.67 h]; Equipment Opreator [3.27 h]; Water Truck [1.63 h]; Dump Truck [1.63 h]; Valve chambers - TSE [0.3 nr] → Skilled labor [16.34 h]; Unskilled Labor [32.67 h]; Equipment Opreator [3.27 h]; Water Truck [1.6 h]; Dump Truck [1.6 h]; Valve chambers - TSE [0.3 nr] |
| 6117 | **RHD4-02-002-C02-(IRR)-Butterfly Valves** | 2027-04-13 → 2027-11-08 (+209d) | 2027-04-17 → 2027-11-11 (+208d) |  |  |
| RHD4CZ7C02IRR3101 | Installation for Butterfly Valves for Irrigation Network - (RD-C-2)-Z7-C02-IRR | 2027-04-13 → 2027-11-08 (+209d) | 2027-04-14 → 2027-11-09 (+209d) |  |  |
| RHD4CZ7C02IRR3201 | Stem and Service box for Butterfly Valves for Irrigation Network - (RD-C-2)-Z7-C02-IRR | 2027-04-15 → 2027-11-10 (+209d) | 2027-04-17 → 2027-11-11 (+208d) |  |  |
| 6686 | **RHD4-02-002-C02-(IRR)-Wash out Valves** | 2027-04-13 → 2027-11-08 (+209d) | 2027-04-17 → 2027-11-11 (+208d) |  |  |
| RHD4CZ7C02IRR3102 | Installation for Wash out Valve for Irrigation Network - (RD-C-2)-Z7-C02-IRR | 2027-04-13 → 2027-11-08 (+209d) | 2027-04-14 → 2027-11-09 (+209d) |  |  |
| RHD4CZ7C02IRR3202 | Stem and Service box for Wash out Valve for Irrigation Network - (RD-C-2)-Z7-C02-IRR | 2027-04-15 → 2027-11-10 (+209d) | 2027-04-17 → 2027-11-11 (+208d) |  |  |
| 6685 | **RHD4-02-002-C02-(IRR)-Wash out Chamber** | 2027-04-06 → 2027-11-01 (+209d) | 2027-04-14 → 2027-11-09 (+209d) |  |  |
| RHD4CZ7C02IRR2101 | Excavation and Bedding for Wash out Chamber for Irrigation Network - (RD-C-2)-Z7-C02-IRR | 2027-04-06 → 2027-11-01 (+209d) | 2027-04-07 → 2027-11-02 (+209d) |  |  |
| RHD4CZ7C02IRR2201 | PC works for Wash out Chamber for Irrigation Network - (RD-C-2)-Z7-C02-IRR | 2027-04-08 → 2027-11-03 (+209d) | 2027-04-10 → 2027-11-04 (+208d) |  |  |
| RHD4CZ7C02IRR2301 | Installation for Wash out Chamber for Irrigation Network - (RD-C-2)-Z7-C02-IRR | 2027-04-11 → 2027-11-06 (+209d) | 2027-04-12 → 2027-11-07 (+209d) |  |  |
| RHD4CZ7C02IRR2401 | Backfilling works for Wash out Chamber for Irrigation Network - (RD-C-2)-Z7-C02-IRR | 2027-04-13 → 2027-11-08 (+209d) | 2027-04-14 → 2027-11-09 (+209d) |  |  |
| 6140 | **RHD4-02-002-Z7-C02-Medium Voltage Network - MV** | 2027-02-03 → 2027-07-14 (+161d) | 2027-03-27 → 2027-09-07 (+164d) |  |  |
| 6141 | **RHD4-02-002-C02-(MV)-Medium Voltage cable trench** | 2027-02-03 → 2027-07-14 (+161d) | 2027-03-08 → 2027-08-31 (+176d) |  |  |
| RHD4CZ7C02MV1100 | Excavation for Medium Voltage Trench - (RD-C-2)-Z7-C02-MV | 2027-02-03 → 2027-07-14 (+161d) | 2027-02-07 → 2027-07-26 (+169d) | 4d → 11d | resources Skilled labor [114.89 h]; Unskilled Labor [229.9 h]; Equipment Opreator [344.79 h]; Excavator-Poclain [114.89 h]; Dump Truck [229.9 h]; Excavation for Trench size 40cm wide and 80cm deep ( for 1 cables) [93.97 m3]; Excavation for Trench size 60cm wide and 80cm deep ( for 2 cables) [221.03 m3]; Excavation for Trench size 180cm wide and 80cm deep (for 6 cables) [374.11 m3]; Excavation for Trench size 360cm wide and 80cm deep (for 12 cables) [49.74 m3] → Skilled labor [114.89 h]; Unskilled Labor [229.9 h]; Equipment Opreator [344.8 h]; Excavator-Poclain [114.89 h]; Dump Truck [229.9 h]; Excavation for Trench size 40cm wide and 80cm deep ( for 1 cables) [93.97 m3]; Excavation for Trench size 60cm wide and 80cm deep ( for 2 cables) [221.03 m3]; Excavation for Trench size 180cm wide and 80cm deep (for 6 cables) [374.11 m3]; Excavation for Trench size 360cm wide and 80cm deep (for 12 cables) [49.74 m3] |
| RHD4CZ7C02MV1200 | Trench Backfilling for Medium Voltage Network - (RD-C-2)-Z7-C02-MV | 2027-03-04 → 2027-08-19 (+168d) | 2027-03-08 → 2027-08-31 (+176d) | 4d → 11d |  |
| 6142 | **RHD4-02-002-C02-(MV)-Medium Voltage duct banks** | 2027-02-08 → 2027-07-27 (+169d) | 2027-02-17 → 2027-08-05 (+169d) |  |  |
| RHD4CZ7C02MV2100 | Excavation of Duct Banks for Medium Voltage Network - (RD-C-2)-Z7-C02-MV | 2027-02-08 → 2027-07-27 (+169d) | 2027-02-09 → 2027-07-28 (+169d) |  |  |
| RHD4CZ7C02MV2200 | Installation of Duct Banks for Medium Voltage Network - (RD-C-2)-Z7-C02-MV | 2027-02-10 → 2027-07-29 (+169d) | 2027-02-13 → 2027-08-01 (+169d) |  |  |
| RHD4CZ7C02MV2300 | Pouring of Duct Banks for Medium Voltage Network - (RD-C-2)-Z7-C02-MV | 2027-02-14 → 2027-08-02 (+169d) | 2027-02-15 → 2027-08-03 (+169d) |  |  |
| RHD4CZ7C02MV2400 | Backfilling of Duct Banks for Medium Voltage Network - (RD-C-2)-Z7-C02-MV | 2027-02-16 → 2027-08-04 (+169d) | 2027-02-17 → 2027-08-05 (+169d) |  |  |
| 6143 | **RHD4-02-002-C02-(MV)-Medium Voltage cables 3Cx 500 mm²** | 2027-02-08 → 2027-07-27 (+169d) | 2027-03-27 → 2027-09-07 (+164d) |  |  |
| RHD4CZ7C02MV3100 | Installation of Medium Voltage Cables 3Cx 500 mm² - (RD-C-2)-Z7-C02-MV | 2027-02-08 → 2027-07-27 (+169d) | 2027-02-25 → 2027-08-12 (+168d) |  | resources Skilled labor [158.02 h]; Unskilled Labor [631.97 h]; Electrician [316.04 h]; Equipment Opreator [474.06 h]; Boom Truck [158.02 h]; Cable Laying Machine [316.04 h]; Cable 13.8 kV 3Cx 500 mm² Al/XLPE,/LLDPE / Unarmored [6528.82 m] → Skilled labor [158.02 h]; Unskilled Labor [632 h]; Electrician [316 h]; Equipment Opreator [474.06 h]; Boom Truck [158.02 h]; Cable Laying Machine [316 h]; Cable 13.8 kV 3Cx 500 mm² Al/XLPE,/LLDPE / Unarmored [6528.82 m] |
| RHD4CZ7C02MV3200 | Joints Installation of Medium Voltage Cables 3Cx 500 mm² - (RD-C-2)-Z7-C02-MV | 2027-02-27 → 2027-08-14 (+168d) | 2027-03-03 → 2027-08-18 (+168d) |  |  |
| RHD4CZ7C02MV3300 | Testing of Medium Voltage Cables 3Cx 500 mm² - (RD-C-2)-Z7-C02-MV | 2027-03-04 → 2027-08-19 (+168d) | 2027-03-24 → 2027-09-05 (+165d) |  | resources Skilled labor [158.02 h]; Unskilled Labor [631.97 h]; Electrician [316.04 h]; Cable 13.8 kV 3Cx 500 mm² Al/XLPE,/LLDPE / Unarmored [725.42 m] → Skilled labor [158.02 h]; Unskilled Labor [632 h]; Electrician [316 h]; Cable 13.8 kV 3Cx 500 mm² Al/XLPE,/LLDPE / Unarmored [725.42 m] |
| RHD4CZ7C02MV3400 | Termination of Medium Voltage Cables 3Cx 500 mm² - (RD-C-2)-Z7-C02-MV | 2027-03-25 → 2027-09-06 (+165d) | 2027-03-27 → 2027-09-07 (+164d) |  |  |
| 6144 | **RHD4-02-002-C02-(MV)-Medium Voltage cables 3Cx 50 mm²** | 2027-03-25 → 2027-09-06 (+165d) | 2027-03-27 → 2027-09-07 (+164d) |  |  |
| RHD4CZ7C02MV3401 | Termination of Medium Voltage Cables 3Cx 50 mm² - (RD-C-2)-Z7-C02-MV | 2027-03-25 → 2027-09-06 (+165d) | 2027-03-27 → 2027-09-07 (+164d) |  |  |
| 6147 | **RHD4-02-002-Z7-C02-Low Voltage Network - LV** | 2027-02-10 → 2027-07-29 (+169d) | 2027-04-25 → 2027-10-04 (+162d) |  |  |
| 6148 | **RHD4-02-002-C02-(LV)-Low Voltage duct banks** | 2027-02-10 → 2027-07-29 (+169d) | 2027-03-02 → 2027-08-17 (+168d) |  |  |
| RHD4CZ7C02LV2100 | Excavation of Duct Banks for Low Voltage Network - (RD-C-2)-Z7-C02-LV | 2027-02-10 → 2027-07-29 (+169d) | 2027-02-14 → 2027-08-02 (+169d) |  | resources Skilled labor [42.36 h]; Unskilled Labor [42.36 h]; Equipment Opreator [84.73 h]; Excavator-Poclain [42.36 h]; Dump Truck [42.36 h]; Duct bank for LV cables UPVC (2xø110mm) [5.84 m] → Skilled labor [42.4 h]; Unskilled Labor [42.4 h]; Equipment Opreator [84.73 h]; Excavator-Poclain [42.4 h]; Dump Truck [42.4 h]; Duct bank for LV cables UPVC (2xø110mm) [5.84 m] |
| RHD4CZ7C02LV2200 | Installation of Duct Banks for Low Voltage Network - (RD-C-2)-Z7-C02-LV | 2027-02-15 → 2027-08-03 (+169d) | 2027-02-21 → 2027-08-09 (+169d) |  |  |
| RHD4CZ7C02LV2300 | Pouring of Duct Banks for Low Voltage Network - (RD-C-2)-Z7-C02-LV | 2027-02-23 → 2027-08-10 (+168d) | 2027-02-27 → 2027-08-14 (+168d) |  | resources Skilled labor [42.36 h]; Unskilled Labor [42.36 h]; Equipment Opreator [16.99 h]; Concrete Mixer Truck [8.49 h]; Concrete Pump [8.49 h]; Duct bank for LV cables UPVC (2xø110mm) [37.95 m] → Skilled labor [42.4 h]; Unskilled Labor [42.4 h]; Equipment Opreator [16.99 h]; Concrete Mixer Truck [8.49 h]; Concrete Pump [8.49 h]; Duct bank for LV cables UPVC (2xø110mm) [37.95 m] |
| RHD4CZ7C02LV2400 | Backfilling of Duct Banks for Low Voltage Network - (RD-C-2)-Z7-C02-LV | 2027-02-28 → 2027-08-15 (+168d) | 2027-03-02 → 2027-08-17 (+168d) |  |  |
| 6149 | **RHD4-02-002-C02-(LV)-Low Voltage Drawpit** | 2027-03-28 → 2027-09-08 (+164d) | 2027-04-04 → 2027-09-12 (+161d) |  |  |
| RHD4CZ7C02LV5100 | Excavation of Drawpit size 900x900x1000mm for Low Voltage Network - (RD-C-2)-Z7-C02-LV | 2027-03-28 → 2027-09-08 (+164d) | 2027-04-01 → 2027-09-09 (+161d) | 5d → 2d | resources Skilled labor [10.02 h]; Unskilled Labor [10.02 h]; Equipment Opreator [7.95 h]; Excavator-Poclain [4.03 h]; Dump Truck [4.03 h]; Drawpit with medium duty steel cover, size900x900x1000mm, [1.65 Unit] → Skilled labor [10.02 h]; Unskilled Labor [10.02 h]; Equipment Opreator [7.95 h]; Excavator-Poclain [4 h]; Dump Truck [4 h]; Drawpit with medium duty steel cover, size900x900x1000mm, [1.65 Unit] |
| RHD4CZ7C02LV5200 | Installation of Drawpit size 900x900x1000mm for Low Voltage Network - (RD-C-2)-Z7-C02-LV | 2027-04-03 → 2027-09-11 (+161d) | 2027-04-04 → 2027-09-12 (+161d) |  | resources Skilled labor [10.02 h]; Unskilled Labor [10.02 h]; Equipment Opreator [4.03 h]; Boom Truck [4.03 h]; Drawpit with medium duty steel cover, size900x900x1000mm, [9.35 Unit] → Skilled labor [10.02 h]; Unskilled Labor [10.02 h]; Equipment Opreator [4 h]; Boom Truck [4 h]; Drawpit with medium duty steel cover, size900x900x1000mm, [9.35 Unit] |
| 6150 | **RHD4-02-002-C02-(LV)-Low Voltage cables** | 2027-04-05 → 2027-09-13 (+161d) | 2027-04-25 → 2027-10-04 (+162d) |  |  |
| RHD4CZ7C02LV3100 | Excavation for Low Voltage Cables for Low Voltage Network - (RD-C-2)-Z7-C02-LV | 2027-04-05 → 2027-09-13 (+161d) | 2027-04-10 → 2027-09-18 (+161d) |  |  |
| RHD4CZ7C02LV3200 | Cable Laying of Low Voltage Cables for Low Voltage Network - (RD-C-2)-Z7-C02-LV | 2027-04-11 → 2027-09-19 (+161d) | 2027-04-15 → 2027-09-25 (+163d) |  | resources Skilled labor [44.54 h]; Unskilled Labor [178.27 h]; Electrician [89.08 h]; Equipment Opreator [133.62 h]; Boom Truck [44.54 h]; Cable Laying Machine [89.08 h]; Cable, Copper 4x185mm2/ CU/XLPE/PVC [101 m]; Cable, Copper 4x70mm2/ CU/XLPE/PVC [59.58 m]; Cable, Copper 4x50mm2/ CU/XLPE/PVC +1x25mm2 CU/PVC [111 m]; Cable, Copper 3x10mm2/ CU/XLPE/SWA/PVC [392.23 m] → Skilled labor [44.54 h]; Unskilled Labor [178.27 h]; Electrician [89.08 h]; Equipment Opreator [133.6 h]; Boom Truck [44.54 h]; Cable Laying Machine [89.08 h]; Cable, Copper 4x185mm2/ CU/XLPE/PVC [101 m]; Cable, Copper 4x70mm2/ CU/XLPE/PVC [59.58 m]; Cable, Copper 4x50mm2/ CU/XLPE/PVC +1x25mm2 CU/PVC [111 m]; Cable, Copper 3x10mm2/ CU/XLPE/SWA/PVC [392.23 m] |
| RHD4CZ7C02LV3300 | Warning tape and Backfill for Low Voltage Cables for Low Voltage Network - (RD-C-2)-Z7-C02-LV | 2027-04-17 → 2027-09-26 (+162d) | 2027-04-21 → 2027-09-30 (+162d) |  |  |
| RHD4CZ7C02LV3400 | Testing of Low Voltage Cables for Low Voltage Network - (RD-C-2)-Z7-C02-LV | 2027-04-22 → 2027-10-02 (+163d) | 2027-04-25 → 2027-10-04 (+162d) |  |  |
| 6153 | **RHD4-02-002-Z7-C02-Street Lighting Network - SL** | 2027-02-15 → 2027-08-03 (+169d) | 2027-06-28 → 2028-01-11 (+197d) |  |  |
| 6154 | **RHD4-02-002-C02-(SL)-Street Lighting duct banks** | 2027-02-15 → 2027-08-03 (+169d) | 2027-03-24 → 2027-09-05 (+165d) |  |  |
| RHD4CZ7C02SL2100 | Excavation of Duct Banks for Street Lighting Network - (RD-C-2)-Z7-C02-SL | 2027-02-15 → 2027-08-03 (+169d) | 2027-02-23 → 2027-08-10 (+168d) |  |  |
| RHD4CZ7C02SL2200 | Installation of Duct Banks for Street Lighting Network - (RD-C-2)-Z7-C02-SL | 2027-02-24 → 2027-08-11 (+168d) | 2027-03-07 → 2027-08-22 (+168d) |  |  |
| RHD4CZ7C02SL2300 | Pouring of Duct Banks for Street Lighting Network - (RD-C-2)-Z7-C02-SL | 2027-03-08 → 2027-08-23 (+168d) | 2027-03-18 → 2027-08-30 (+165d) |  | resources Skilled labor [70.02 h]; Unskilled Labor [70.02 h]; Equipment Opreator [27.99 h]; Concrete Mixer Truck [14.05 h]; Concrete Pump [14.05 h]; Road Crossing Duct for Street Lighting cables UPVC (2x?110mm) [25.63 m]; Road Crossing Duct for Street Lighting cables UPVC (4x?110mm) [29.93 m]; Road Crossing Duct for Street Lighting cables UPVC (6x?110mm) [7.17 m] → Skilled labor [70.02 h]; Unskilled Labor [70.02 h]; Equipment Opreator [28 h]; Concrete Mixer Truck [14.05 h]; Concrete Pump [14.05 h]; Road Crossing Duct for Street Lighting cables UPVC (2x?110mm) [25.63 m]; Road Crossing Duct for Street Lighting cables UPVC (4x?110mm) [29.93 m]; Road Crossing Duct for Street Lighting cables UPVC (6x?110mm) [7.17 m] |
| RHD4CZ7C02SL2400 | Backfilling of Duct Banks for Street Lighting Network - (RD-C-2)-Z7-C02-SL | 2027-03-20 → 2027-08-31 (+164d) | 2027-03-24 → 2027-09-05 (+165d) |  |  |
| 6155 | **RHD4-02-002-C02-(SL)-Street Lighting Drawpit** | 2027-04-26 → 2027-11-13 (+201d) | 2027-04-29 → 2027-11-17 (+202d) |  |  |
| RHD4CZ7C02SL5100 | Excavation of Drawpit size 600x600x900mm for Street Lighting Network - (RD-C-2)-Z7-C02-SL | 2027-04-26 → 2027-11-13 (+201d) | 2027-04-27 → 2027-11-14 (+201d) |  |  |
| RHD4CZ7C02SL5200 | Installation of Drawpit size 600x600x900mm for Street Lighting Network - (RD-C-2)-Z7-C02-SL | 2027-04-28 → 2027-11-16 (+202d) | 2027-04-29 → 2027-11-17 (+202d) |  |  |
| 6156 | **RHD4-02-002-C02-(SL)-Street Lighting cables** | 2027-05-01 → 2027-11-18 (+201d) | 2027-06-03 → 2027-12-18 (+198d) |  |  |
| RHD4CZ7C02SL3100 | Excavation for Street Lighting Cables for Street Lighting Network - (RD-C-2)-Z7-C02-SL | 2027-05-01 → 2027-11-18 (+201d) | 2027-05-09 → 2027-11-27 (+202d) |  |  |
| RHD4CZ7C02SL3200 | Cable Laying of Street Lighting Cables for Street Lighting Network - (RD-C-2)-Z7-C02-SL | 2027-05-10 → 2027-11-28 (+202d) | 2027-05-22 → 2027-12-05 (+197d) |  |  |
| RHD4CZ7C02SL3300 | Warning tape and Backfill for Street Lighting Cables for Street Lighting Network - (RD-C-2)-Z7-C02-SL | 2027-05-23 → 2027-12-06 (+197d) | 2027-05-30 → 2027-12-13 (+197d) |  |  |
| RHD4CZ7C02SL3400 | Testing of Street Lighting Cables for Street Lighting Network - (RD-C-2)-Z7-C02-SL | 2027-05-31 → 2027-12-14 (+197d) | 2027-06-03 → 2027-12-18 (+198d) |  |  |
| 6157 | **RHD4-02-002-C02-(SL)-Street Lighting Poles** | 2027-06-05 → 2027-12-19 (+197d) | 2027-06-19 → 2028-01-02 (+197d) |  |  |
| RHD4CZ7C02SL1100 | Excavation for RC Base for Lighting Poles for Street Lighting Network - (RD-C-2)-Z7-C02-SL | 2027-06-05 → 2027-12-19 (+197d) | 2027-06-06 → 2027-12-20 (+197d) |  |  |
| RHD4CZ7C02SL1200 | Installation for RC Base for Lighting Poles for Street Lighting Network - (RD-C-2)-Z7-C02-SL | 2027-06-07 → 2027-12-21 (+197d) | 2027-06-08 → 2027-12-22 (+197d) |  |  |
| RHD4CZ7C02SL1300 | Backfill for RC Base for Lighting Poles for Street Lighting Network - (RD-C-2)-Z7-C02-SL | 2027-06-09 → 2027-12-23 (+197d) | 2027-06-10 → 2027-12-25 (+198d) |  |  |
| RHD4CZ7C02SL1400 | Installation for Lighting Poles for Street Lighting Network - (RD-C-2)-Z7-C02-SL | 2027-06-12 → 2027-12-26 (+197d) | 2027-06-14 → 2027-12-28 (+197d) |  |  |
| RHD4CZ7C02SL1500 | Luminaire Installation for Lighting Poles for Street Lighting Network - (RD-C-2)-Z7-C02-SL | 2027-06-15 → 2027-12-29 (+197d) | 2027-06-19 → 2028-01-02 (+197d) |  |  |
| 6158 | **RHD4-02-002-C02-(SL)-Street Lighting Feeder Pillars** | 2027-06-20 → 2028-01-03 (+197d) | 2027-06-26 → 2028-01-09 (+197d) |  |  |
| RHD4CZ7C02SL4100 | Leveling for Distribution Pillars for Street Lighting Network - (RD-C-2)-Z7-C02-SL | 2027-06-20 → 2028-01-03 (+197d) | 2027-06-21 → 2028-01-04 (+197d) |  |  |
| RHD4CZ7C02SL4200 | Lean Concrete for Distribution Pillars for Street Lighting Network - (RD-C-2)-Z7-C02-SL | 2027-06-22 → 2028-01-05 (+197d) | 2027-06-23 → 2028-01-06 (+197d) |  |  |
| RHD4CZ7C02SL4300 | Installation of Distribution Pillars for Street Lighting Network - (RD-C-2)-Z7-C02-SL | 2027-06-24 → 2028-01-08 (+198d) | 2027-06-26 → 2028-01-09 (+197d) |  |  |
| 6159 | **RHD4-02-002-C02-(SL)-Street Lighting Earthing System** | 2027-06-27 → 2028-01-10 (+197d) | 2027-06-28 → 2028-01-11 (+197d) |  |  |
| RHD4CZ7C02SL6100 | Installation of Earthing for Lighting Poles and Fedder Pillers for Street Lighting Network - (RD-C-2)-Z7-C02-SL | 2027-06-27 → 2028-01-10 (+197d) | 2027-06-28 → 2028-01-11 (+197d) |  |  |

| ID | Task | Start | Finish | Duration | Other |
| --- | --- | --- | --- | --- | --- |
| 6165 | **RHD4-02-002-Z7-C02-Telecommunications Network - TC** | 2026-08-23 → 2027-02-08 (+169d) | 2027-08-04 → 2028-02-17 (+197d) |  |  |
| 6166 | **RHD4-02-002-C02-(TC)-Telecommunications Ducts** | 2027-06-29 → 2028-01-12 (+197d) | 2027-07-26 → 2028-02-08 (+197d) |  |  |
| RHD4CZ7C02TC2100 | Excavation of HDPE Ducts for Telecom Network - (RD-C-2)-Z7-C02-TC | 2027-06-29 → 2028-01-12 (+197d) | 2027-07-06 → 2028-01-19 (+197d) |  |  |
| RHD4CZ7C02TC2200 | Installation of HDPE Ducts for Telecom Network - (RD-C-2)-Z7-C02-TC | 2027-07-07 → 2028-01-20 (+197d) | 2027-07-18 → 2028-01-31 (+197d) |  |  |
| RHD4CZ7C02TC2400 | Backfilling of HDPE Ducts for Telecom Network - (RD-C-2)-Z7-C02-TC | 2027-07-19 → 2028-02-01 (+197d) | 2027-07-26 → 2028-02-08 (+197d) |  |  |
| 6167 | **RHD4-02-002-C02-(TC)-Telecommunications Manholes** | 2027-07-27 → 2028-02-09 (+197d) | 2027-08-04 → 2028-02-17 (+197d) |  |  |
| RHD4CZ7C02TC5100 | Excavation for Manholes for Telecom Network - (RD-C-2)-Z7-C02-TC | 2027-07-27 → 2028-02-09 (+197d) | 2027-07-31 → 2028-02-13 (+197d) |  |  |
| RHD4CZ7C02TC5200 | Installation of Manholes for Telecom Network - (RD-C-2)-Z7-C02-TC | 2027-08-01 → 2028-02-14 (+197d) | 2027-08-04 → 2028-02-17 (+197d) |  |  |
| 6168 | **RHD4-02-002-C02-(TC)-Telecomminications Road Crossings** | 2026-08-23 → 2027-02-08 (+169d) | 2026-08-31 → 2027-02-24 (+177d) |  |  |
| RHD4CZ7C02TC3100 | Excavation for Road Crossings for Telecom Network - (RD-C-2)-Z7-C02-TC | 2026-08-23 → 2027-02-08 (+169d) | 2026-08-24 → 2027-02-10 (+170d) | 2d → 3d |  |
| RHD4CZ7C02TC3200 | Installation of Road Crossings for Telecom Network - (RD-C-2)-Z7-C02-TC | 2026-08-25 → 2027-02-11 (+170d) | 2026-08-26 → 2027-02-15 (+173d) | 2d → 4d |  |
| RHD4CZ7C02TC3300 | Pouring of Road Crossings for Telecom Network - (RD-C-2)-Z7-C02-TC | 2026-08-27 → 2027-02-16 (+173d) | 2026-08-29 → 2027-02-20 (+175d) | 2d → 4d |  |
| RHD4CZ7C02TC3400 | Backfilling of Road Crossings for Telecom Network - (RD-C-2)-Z7-C02-TC | 2026-08-30 → 2027-02-21 (+175d) | 2026-08-31 → 2027-02-24 (+177d) | 2d → 3d | resources Skilled labor [28.1 h]; Unskilled Labor [28.1 h]; Equipment Opreator [11.22 h]; Excavator-Poclain [11.22 h]; Road crossing ducts, (6*50mm) HDPE -TC [7.74 m] → Skilled labor [28.1 h]; Unskilled Labor [28.1 h]; Equipment Opreator [11.2 h]; Excavator-Poclain [11.2 h]; Road crossing ducts, (6*50mm) HDPE -TC [7.74 m] |
| 6169 | **RHD4-02-002-Z7-C02-Information and Communication Technologies - ICT** | 2026-08-23 → 2027-02-08 (+169d) | 2027-08-30 → 2028-03-21 (+204d) |  |  |
| 6170 | **RHD4-02-002-C02-(ICT)-Information and Communication Technologies Ducts** | 2027-08-05 → 2028-02-19 (+198d) | 2027-08-30 → 2028-03-21 (+204d) |  |  |
| RHD4CZ7C02ICT2100 | Excavation of HDPE Ducts for ICT Network - (RD-C-2)-Z7-C02-ICT | 2027-08-05 → 2028-02-19 (+198d) | 2027-08-12 → 2028-03-01 (+202d) |  |  |
| RHD4CZ7C02ICT2200 | Installation of HDPE Ducts for ICT Network - (RD-C-2)-Z7-C02-ICT | 2027-08-14 → 2028-03-02 (+201d) | 2027-08-18 → 2028-03-13 (+208d) | 5d → 10d |  |
| RHD4CZ7C02ICT2400 | Backfilling of HDPE Ducts for ICT Network - (RD-C-2)-Z7-C02-ICT | 2027-08-23 → 2028-03-14 (+204d) | 2027-08-30 → 2028-03-21 (+204d) |  |  |
| 6171 | **RHD4-02-002-C02-(ICT)-Information and Communication Technologies Manholes** | 2027-08-14 → 2028-03-02 (+201d) | 2027-08-22 → 2028-03-11 (+202d) |  |  |
| RHD4CZ7C02ICT5100 | Excavation for Manholes for ICT Network - (RD-C-2)-Z7-C02-ICT | 2027-08-14 → 2028-03-02 (+201d) | 2027-08-17 → 2028-03-06 (+202d) |  |  |
| RHD4CZ7C02ICT5200 | Installation of Manholes for ICT Network - (RD-C-2)-Z7-C02-ICT | 2027-08-18 → 2028-03-07 (+202d) | 2027-08-22 → 2028-03-11 (+202d) |  |  |
| 6172 | **RHD4-02-002-C02-(ICT)-Information and Communication Technologies Road Crossings** | 2026-08-23 → 2027-02-08 (+169d) | 2026-08-31 → 2027-03-04 (+185d) |  |  |
| RHD4CZ7C02ICT3100 | Excavation for Road Crossings for ICT Network - (RD-C-2)-Z7-C02-ICT | 2026-08-23 → 2027-02-08 (+169d) | 2026-08-24 → 2027-02-10 (+170d) | 2d → 3d |  |
| RHD4CZ7C02ICT3200 | Installation of Road Crossings for ICT Network - (RD-C-2)-Z7-C02-ICT | 2026-08-25 → 2027-02-20 (+179d) | 2026-08-26 → 2027-02-24 (+182d) | 2d → 4d |  |
| RHD4CZ7C02ICT3300 | Pouring of Road Crossings for ICT Network - (RD-C-2)-Z7-C02-ICT | 2026-08-27 → 2027-02-25 (+182d) | 2026-08-29 → 2027-03-01 (+184d) | 2d → 4d |  |
| RHD4CZ7C02ICT3400 | Backfilling of Road Crossings for ICT Network - (RD-C-2)-Z7-C02-ICT | 2026-08-30 → 2027-03-02 (+184d) | 2026-08-31 → 2027-03-04 (+185d) | 2d → 3d |  |
| 6173 | **RHD4-02-002-Z7-C02-Security Network - CCTV** | 2027-08-31 → 2028-03-22 (+204d) | 2027-10-03 → 2028-04-29 (+209d) |  |  |
| 6174 | **RHD4-02-002-C02-(CCTV)-Civil Works** | 2027-08-31 → 2028-03-22 (+204d) | 2027-09-09 → 2028-04-01 (+205d) |  |  |
| RHD4CZ7C02CCTV2100 | Civil Works for Security Network - (RD-C-2)-Z7-C02-CCTV | 2027-08-31 → 2028-03-22 (+204d) | 2027-09-09 → 2028-04-01 (+205d) |  |  |
| 6175 | **RHD4-02-002-C02-(CCTV)-CCTV Poles** | 2027-09-11 → 2028-04-02 (+204d) | 2027-09-19 → 2028-04-10 (+204d) |  |  |
| RHD4CZ7C02CCTV1100 | Excavation for RC Base for CCTV Poles for Security Network - (RD-C-2)-Z7-C02-CCTV | 2027-09-11 → 2028-04-02 (+204d) | 2027-09-12 → 2028-04-03 (+204d) |  |  |
| RHD4CZ7C02CCTV1200 | Installation for RC Base for CCTV Poles for Security Network - (RD-C-2)-Z7-C02-CCTV | 2027-09-13 → 2028-04-04 (+204d) | 2027-09-14 → 2028-04-05 (+204d) |  |  |
| RHD4CZ7C02CCTV1300 | Backfill for RC Base for CCTV Poles for Security Network - (RD-C-2)-Z7-C02-CCTV | 2027-09-15 → 2028-04-06 (+204d) | 2027-09-16 → 2028-04-08 (+205d) |  |  |
| RHD4CZ7C02CCTV1400 | Installation for CCTV Poles for Security Network - (RD-C-2)-Z7-C02-CCTV | 2027-09-18 → 2028-04-09 (+204d) | 2027-09-19 → 2028-04-10 (+204d) |  |  |
| 6176 | **RHD4-02-002-C02-(CCTV)-Camera** | 2027-09-20 → 2028-04-11 (+204d) | 2027-09-21 → 2028-04-12 (+204d) |  |  |
| RHD4CZ7C02CCTV3100 | Installation for Cameras for Security Network - (RD-C-2)-Z7-C02-CCTV | 2027-09-20 → 2028-04-11 (+204d) | 2027-09-21 → 2028-04-12 (+204d) |  |  |
| 6177 | **RHD4-02-002-C02-(CCTV)-Power and Infrastructure** | 2027-09-29 → 2028-04-25 (+209d) | 2027-10-03 → 2028-04-29 (+209d) |  |  |
| RHD4CZ7C02CCTV4100 | Installation of Power outlet, UPS and midspan for PTZ Camerafor Cameras for Security Network - (RD-C-2)-Z7-C02-CCTV | 2027-09-29 → 2028-04-25 (+209d) | 2027-09-30 → 2028-04-26 (+209d) |  |  |
| RHD4CZ7C02CCTV4200 | Short Range Wireless PoP wireless Bridgefor CCTV Poles for Security Network - (RD-C-2)-Z7-C02-CCTV | 2027-10-02 → 2028-04-27 (+208d) | 2027-10-03 → 2028-04-29 (+209d) |  |  |
| 6179 | **RHD4-02-002-C02-(CCTV)-CCTV Panels and Components** | 2027-09-22 → 2028-04-13 (+204d) | 2027-09-28 → 2028-04-24 (+209d) |  |  |
| RHD4CZ7C02CCTV6100 | Installation for CCTV Panels for Security Network - (RD-C-2)-Z7-C02-CCTV | 2027-09-22 → 2028-04-13 (+204d) | 2027-09-28 → 2028-04-24 (+209d) | 5d → 10d |  |
| 5623 | **RHD4-02-002-Z7-RA03** | 2026-08-05 → 2027-02-08 (+187d) | 2027-10-06 → 2028-04-02 (+179d) |  |  |
| 5802 | **RHD4-02-002-Z7-RA03-Road Works - RD** | 2026-09-01 → 2027-03-06 (+186d) | 2027-10-06 → 2028-04-02 (+179d) |  |  |
| 5803 | **RHD4-02-002-RA03-(RD)-Subgrade** | 2026-09-01 → 2027-03-06 (+186d) | 2026-09-03 → 2027-03-15 (+193d) |  |  |
| RHD4CZ7RA03RD1100 | Supply, lay and compaction subgrade compacted thickness 300 mm for Roads - (ROUND-03)-Z7-RA03-RD | 2026-09-01 → 2027-03-06 (+186d) | 2026-09-03 → 2027-03-15 (+193d) | 3d → 6d |  |
| 5804 | **RHD4-02-002-RA03-(RD)-Aggregate Base Course** | 2026-09-05 → 2027-03-16 (+192d) | 2026-09-07 → 2027-03-21 (+195d) |  |  |
| RHD4CZ7RA03RD2100 | Supply, lay and compaction Aggregate base course compacted thickness 300 mmfor Roads - (ROUND-03)-Z7-RA03-RD | 2026-09-05 → 2027-03-16 (+192d) | 2026-09-07 → 2027-03-21 (+195d) | 3d → 5d |  |
| 5805 | **RHD4-02-002-RA03-(RD)-Bituminous base course Two Layers, including (MC1)&(RC2)** | 2026-09-08 → 2027-03-22 (+195d) | 2027-08-26 → 2028-02-01 (+159d) |  |  |
| RHD4CZ7RA03RD3100 | Supply, lay and Asphaltic base course including Prime Coat (MC1) for 1st Layer - (ROUND-03)-Z7-RA03-RD | 2026-09-08 → 2027-03-22 (+195d) | 2026-09-10 → 2027-03-24 (+195d) |  | resources Skilled labor [24.39 h]; Unskilled Labor [146.69 h]; Equipment Opreator [366.68 h]; Bobcat [24.39 h]; Roller compactor [24.39 h]; Asphalt Paver [24.39 h]; Rubber Compactor [48.9 h]; MC1/RC2 Sprinkler [24.39 h]; Dump Truck [219.99 h]; Bituminous base course (Grading I - Class A), including Prime coat (MC1) & tack coate (RC2) [894.37 m3] → Skilled labor [24.39 h]; Unskilled Labor [146.69 h]; Equipment Opreator [366.68 h]; Bobcat [24.39 h]; Roller compactor [24.39 h]; Asphalt Paver [24.39 h]; Rubber Compactor [48.9 h]; MC1/RC2 Sprinkler [24.39 h]; Dump Truck [220 h]; Bituminous base course (Grading I - Class A), including Prime coat (MC1) & tack coate (RC2) [894.37 m3] |
| RHD4CZ7RA03RD3200 | Supply, lay and Asphaltic base course including Tack Coat (RC2) for 2nd Layer - (ROUND-03)-Z7-RA03-RD | 2027-08-24 → 2028-01-30 (+159d) | 2027-08-26 → 2028-02-01 (+159d) |  | resources Skilled labor [24.39 h]; Unskilled Labor [146.69 h]; Equipment Opreator [366.68 h]; Bobcat [24.39 h]; Roller compactor [24.39 h]; Asphalt Paver [24.39 h]; Rubber Compactor [48.9 h]; MC1/RC2 Sprinkler [24.39 h]; Dump Truck [219.99 h]; Bituminous base course (Grading I - Class A), including Prime coat (MC1) & tack coate (RC2) [894.37 m3] → Skilled labor [24.39 h]; Unskilled Labor [146.69 h]; Equipment Opreator [366.68 h]; Bobcat [24.39 h]; Roller compactor [24.39 h]; Asphalt Paver [24.39 h]; Rubber Compactor [48.9 h]; MC1/RC2 Sprinkler [24.39 h]; Dump Truck [220 h]; Bituminous base course (Grading I - Class A), including Prime coat (MC1) & tack coate (RC2) [894.37 m3] |
| 5807 | **RHD4-02-002-RA03-(RD)-Precast Concrete Curb** | 2027-08-28 → 2028-02-02 (+158d) | 2027-09-01 → 2028-02-07 (+159d) |  |  |
| RHD4CZ7RA03RD5100 | Supply and installation Precast Concrete Kerb for Roads - (ROUND-03)-Z7-RA03-RD | 2027-08-28 → 2028-02-02 (+158d) | 2027-09-01 → 2028-02-07 (+159d) |  |  |
| 5810 | **RHD4-02-002-RA03-(RD)-Traffic Signage** | 2027-09-02 → 2028-02-08 (+159d) | 2027-09-13 → 2028-02-19 (+159d) |  |  |
| RHD4CZ7RA03RD8100 | Installation of Traffic Signage for Road Network - (ROUND-03)-Z7-RA03-RD | 2027-09-02 → 2028-02-08 (+159d) | 2027-09-13 → 2028-02-19 (+159d) |  |  |
| 5806 | **RHD4-02-002-RA03-(RD)-Bituminous concrete wearing course including tack coat (RC2)** | 2027-09-14 → 2028-02-20 (+159d) | 2027-09-15 → 2028-02-21 (+159d) |  |  |
| RHD4CZ7RA03RD4100 | Supply, lay and compaction Asphaltic wearing course including tack Coat (RC2)for Road Network - (ROUND-03)-Z7-RA03-RD | 2027-09-14 → 2028-02-20 (+159d) | 2027-09-15 → 2028-02-21 (+159d) |  |  |
| 5811 | **RHD4-02-002-RA03-(RD)-Speed Table and Wheel Stopper** | 2027-09-16 → 2028-02-23 (+160d) | 2027-09-30 → 2028-03-11 (+163d) |  |  |
| RHD4CZ7RA03RD9100 | Installation for Speed Bump for Road Network - (ROUND-03)-Z7-RA03-RD | 2027-09-16 → 2028-02-23 (+160d) | 2027-09-30 → 2028-03-11 (+163d) |  | resources Mason [373.1 h]; Skilled labor [124.37 h]; Unskilled Labor [248.74 h]; Equipment Opreator [24.83 h]; Boom Truck [24.83 h]; SPEED TABLE [799.38 m2] → Mason [373.1 h]; Skilled labor [124.37 h]; Unskilled Labor [248.74 h]; Equipment Opreator [24.8 h]; Boom Truck [24.8 h]; SPEED TABLE [799.38 m2] |
| 5809 | **RHD4-02-002-RA03-(RD)-Pavement Marking** | 2027-10-02 → 2028-03-28 (+178d) | 2027-10-06 → 2028-04-02 (+179d) |  |  |
| RHD4CZ7RA03RD7100 | Pavement Markings for Road Network - (ROUND-03)-Z7-RA03-RD | 2027-10-02 → 2028-03-28 (+178d) | 2027-10-06 → 2028-04-02 (+179d) |  |  |
| 5762 | **RHD4-02-002-Z7-RA03-Medium Voltage Network - MV** | 2026-09-12 → 2027-03-25 (+194d) | 2026-10-01 → 2027-04-26 (+207d) |  |  |
| 5766 | **RHD4-02-002-RA03-(MV)-Medium Voltage cables 3Cx 50 mm²** | 2026-09-12 → 2027-03-25 (+194d) | 2026-09-15 → 2027-03-29 (+195d) |  |  |
| RHD4CZ7RA03MV3101 | Installation of Medium Voltage Cables 3Cx 50 mm² - (ROUND-03)-Z7-RA03-MV | 2026-09-12 → 2027-03-25 (+194d) | 2026-09-13 → 2027-03-27 (+195d) |  |  |
| RHD4CZ7RA03MV3301 | Testing of Medium Voltage Cables 3Cx 50 mm² - (ROUND-03)-Z7-RA03-MV | 2026-09-14 → 2027-03-28 (+195d) | 2026-09-15 → 2027-03-29 (+195d) |  |  |
| 5768 | **RHD4-02-002-RA03-(MV)-Unit Substations** | 2026-09-16 → 2027-03-30 (+195d) | 2026-10-01 → 2027-04-26 (+207d) |  |  |
| RHD4CZ7RA03MV5100 | Excavation for Unit Substations for Medium Voltage Network - (ROUND-03)-Z7-RA03-MV | 2026-09-16 → 2027-03-30 (+195d) | 2026-09-17 → 2027-03-31 (+195d) |  |  |
| RHD4CZ7RA03MV5200 | Concrete Base Placement for Unit Substations for Medium Voltage Network - (ROUND-03)-Z7-RA03-MV | 2026-09-19 → 2027-04-01 (+194d) | 2026-09-20 → 2027-04-03 (+195d) |  |  |
| RHD4CZ7RA03MV5300 | Installation for Fences and doors for Medium Voltage Network - (ROUND-03)-Z7-RA03-MV | 2026-09-21 → 2027-04-04 (+195d) | 2026-09-27 → 2027-04-08 (+193d) |  |  |
| RHD4CZ7RA03MV5400 | Installation for Unit Substations for Medium Voltage Network - (ROUND-03)-Z7-RA03-MV | 2026-09-28 → 2027-04-22 (+206d) | 2026-10-01 → 2027-04-26 (+207d) |  |  |
| 5769 | **RHD4-02-002-Z7-RA03-Low Voltage Network - LV** | 2027-05-24 → 2027-11-22 (+182d) | 2027-06-08 → 2027-12-07 (+182d) |  |  |

| ID | Task | Start | Finish | Duration | Other |
| --- | --- | --- | --- | --- | --- |
| 5772 | **RHD4-02-002-RA03-(LV)-Low Voltage cables** | 2027-05-24 → 2027-11-22 (+182d) | 2027-06-01 → 2027-11-30 (+182d) |  |  |
| RHD4CZ7RA03LV3100 | Excavation for Low Voltage Cables for Low Voltage Network - (ROUND-03)-Z7-RA03-LV | 2027-05-24 → 2027-11-22 (+182d) | 2027-05-25 → 2027-11-23 (+182d) |  |  |
| RHD4CZ7RA03LV3200 | Cable Laying of Low Voltage Cables for Low Voltage Network - (ROUND-03)-Z7-RA03-LV | 2027-05-26 → 2027-11-24 (+182d) | 2027-05-27 → 2027-11-25 (+182d) |  | resources Skilled labor [0.33 h]; Unskilled Labor [1.52 h]; Electrician [0.76 h]; Equipment Opreator [1.09 h]; Boom Truck [0.33 h]; Cable Laying Machine [0.76 h]; Cable, Copper 4x70mm2/ CU/XLPE/PVC [6.26 m] → Skilled labor [0.33 h]; Unskilled Labor [1.52 h]; Electrician [0.8 h]; Equipment Opreator [1.09 h]; Boom Truck [0.33 h]; Cable Laying Machine [0.8 h]; Cable, Copper 4x70mm2/ CU/XLPE/PVC [6.26 m] |
| RHD4CZ7RA03LV3300 | Warning tape and Backfill for Low Voltage Cables for Low Voltage Network - (ROUND-03)-Z7-RA03-LV | 2027-05-29 → 2027-11-27 (+182d) | 2027-05-30 → 2027-11-28 (+182d) |  | resources Skilled labor [0.33 h]; Unskilled Labor [1.52 h]; Electrician [0.76 h]; Equipment Opreator [0.33 h]; Boom Truck [0.33 h]; Cable, Copper 4x70mm2/ CU/XLPE/PVC [1.56 m] → Skilled labor [0.33 h]; Unskilled Labor [1.52 h]; Electrician [0.8 h]; Equipment Opreator [0.33 h]; Boom Truck [0.33 h]; Cable, Copper 4x70mm2/ CU/XLPE/PVC [1.56 m] |
| RHD4CZ7RA03LV3400 | Testing of Low Voltage Cables for Low Voltage Network - (ROUND-03)-Z7-RA03-LV | 2027-05-31 → 2027-11-29 (+182d) | 2027-06-01 → 2027-11-30 (+182d) |  |  |
| 5773 | **RHD4-02-002-RA03-(LV)-Low Voltage Distribution Pillars** | 2027-06-02 → 2027-12-01 (+182d) | 2027-06-08 → 2027-12-07 (+182d) |  |  |
| RHD4CZ7RA03LV4100 | Leveling for Distribution Pillars for Low Voltage Network - (ROUND-03)-Z7-RA03-LV | 2027-06-02 → 2027-12-01 (+182d) | 2027-06-03 → 2027-12-02 (+182d) |  |  |
| RHD4CZ7RA03LV4200 | Lean Concrete for Distribution Pillars for Low Voltage Network - (ROUND-03)-Z7-RA03-LV | 2027-06-05 → 2027-12-04 (+182d) | 2027-06-06 → 2027-12-05 (+182d) |  |  |
| RHD4CZ7RA03LV4300 | Installation of Distribution Pillars for Low Voltage Network - (ROUND-03)-Z7-RA03-LV | 2027-06-07 → 2027-12-06 (+182d) | 2027-06-08 → 2027-12-07 (+182d) |  |  |
| 5775 | **RHD4-02-002-Z7-RA03-Street Lighting Network - SL** | 2027-03-25 → 2027-09-06 (+165d) | 2027-05-22 → 2027-10-30 (+161d) |  |  |
| 5776 | **RHD4-02-002-RA03-(SL)-Street Lighting duct banks** | 2027-03-25 → 2027-09-06 (+165d) | 2027-04-12 → 2027-09-25 (+166d) |  |  |
| RHD4CZ7RA03SL2100 | Excavation of Duct Banks for Street Lighting Network - (ROUND-03)-Z7-RA03-SL | 2027-03-25 → 2027-09-06 (+165d) | 2027-03-29 → 2027-09-09 (+164d) |  |  |
| RHD4CZ7RA03SL2200 | Installation of Duct Banks for Street Lighting Network - (ROUND-03)-Z7-RA03-SL | 2027-03-30 → 2027-09-11 (+165d) | 2027-04-04 → 2027-09-15 (+164d) |  |  |
| RHD4CZ7RA03SL2300 | Pouring of Duct Banks for Street Lighting Network - (ROUND-03)-Z7-RA03-SL | 2027-04-05 → 2027-09-16 (+164d) | 2027-04-08 → 2027-09-20 (+165d) |  | resources Skilled labor [36.05 h]; Unskilled Labor [36.05 h]; Equipment Opreator [14.38 h]; Concrete Mixer Truck [7.19 h]; Concrete Pump [7.19 h]; Road Crossing Duct for Street Lighting cables UPVC (2x?110mm) [21.38 m]; Road Crossing Duct for Street Lighting cables UPVC (4x?110mm) [10.89 m] → Skilled labor [36.05 h]; Unskilled Labor [36.05 h]; Equipment Opreator [14.4 h]; Concrete Mixer Truck [7.2 h]; Concrete Pump [7.2 h]; Road Crossing Duct for Street Lighting cables UPVC (2x?110mm) [21.38 m]; Road Crossing Duct for Street Lighting cables UPVC (4x?110mm) [10.89 m] |
| RHD4CZ7RA03SL2400 | Backfilling of Duct Banks for Street Lighting Network - (ROUND-03)-Z7-RA03-SL | 2027-04-10 → 2027-09-21 (+164d) | 2027-04-12 → 2027-09-25 (+166d) |  |  |
| 5777 | **RHD4-02-002-RA03-(SL)-Street Lighting Drawpit** | 2027-04-13 → 2027-09-26 (+166d) | 2027-04-17 → 2027-09-29 (+165d) |  |  |
| RHD4CZ7RA03SL5100 | Excavation of Drawpit size 600x600x900mm for Street Lighting Network - (ROUND-03)-Z7-RA03-SL | 2027-04-13 → 2027-09-26 (+166d) | 2027-04-14 → 2027-09-27 (+166d) |  |  |
| RHD4CZ7RA03SL5200 | Installation of Drawpit size 600x600x900mm for Street Lighting Network - (ROUND-03)-Z7-RA03-SL | 2027-04-15 → 2027-09-28 (+166d) | 2027-04-17 → 2027-09-29 (+165d) |  |  |
| 5778 | **RHD4-02-002-RA03-(SL)-Street Lighting cables** | 2027-04-18 → 2027-09-30 (+165d) | 2027-04-26 → 2027-10-09 (+166d) |  |  |
| RHD4CZ7RA03SL3100 | Excavation for Street Lighting Cables for Street Lighting Network - (ROUND-03)-Z7-RA03-SL | 2027-04-18 → 2027-09-30 (+165d) | 2027-04-19 → 2027-10-02 (+166d) |  |  |
| RHD4CZ7RA03SL3200 | Cable Laying of Street Lighting Cables for Street Lighting Network - (ROUND-03)-Z7-RA03-SL | 2027-04-20 → 2027-10-03 (+166d) | 2027-04-21 → 2027-10-04 (+166d) |  | resources Skilled labor [15.79 h]; Unskilled Labor [63.16 h]; Electrician [31.58 h]; Equipment Opreator [47.37 h]; Boom Truck [15.79 h]; Cable Laying Machine [31.58 h]; Cable, Copper 4x16mm2/ CU/XLPE/SWA/PVC + 1x16mm2 CU/PVC [42.45 m]; Cable, Copper 4x10mm2/ CU/XLPE/SWA/PVC + 1x10mm2 CU/PVC [218.72 m] → Skilled labor [15.79 h]; Unskilled Labor [63.2 h]; Electrician [31.58 h]; Equipment Opreator [47.37 h]; Boom Truck [15.79 h]; Cable Laying Machine [31.58 h]; Cable, Copper 4x16mm2/ CU/XLPE/SWA/PVC + 1x16mm2 CU/PVC [42.45 m]; Cable, Copper 4x10mm2/ CU/XLPE/SWA/PVC + 1x10mm2 CU/PVC [218.72 m] |
| RHD4CZ7RA03SL3300 | Warning tape and Backfill for Street Lighting Cables for Street Lighting Network - (ROUND-03)-Z7-RA03-SL | 2027-04-22 → 2027-10-05 (+166d) | 2027-04-24 → 2027-10-06 (+165d) |  | resources Skilled labor [15.79 h]; Unskilled Labor [63.16 h]; Electrician [31.58 h]; Equipment Opreator [15.79 h]; Boom Truck [15.79 h]; Cable, Copper 4x16mm2/ CU/XLPE/SWA/PVC + 1x16mm2 CU/PVC [10.61 m]; Cable, Copper 4x10mm2/ CU/XLPE/SWA/PVC + 1x10mm2 CU/PVC [54.68 m] → Skilled labor [15.79 h]; Unskilled Labor [63.2 h]; Electrician [31.58 h]; Equipment Opreator [15.79 h]; Boom Truck [15.79 h]; Cable, Copper 4x16mm2/ CU/XLPE/SWA/PVC + 1x16mm2 CU/PVC [10.61 m]; Cable, Copper 4x10mm2/ CU/XLPE/SWA/PVC + 1x10mm2 CU/PVC [54.68 m] |
| RHD4CZ7RA03SL3400 | Testing of Street Lighting Cables for Street Lighting Network - (ROUND-03)-Z7-RA03-SL | 2027-04-25 → 2027-10-07 (+165d) | 2027-04-26 → 2027-10-09 (+166d) |  |  |
| 5779 | **RHD4-02-002-RA03-(SL)-Street Lighting Poles** | 2027-04-27 → 2027-10-10 (+166d) | 2027-05-08 → 2027-10-20 (+165d) |  |  |
| RHD4CZ7RA03SL1100 | Excavation for RC Base for Lighting Poles for Street Lighting Network - (ROUND-03)-Z7-RA03-SL | 2027-04-27 → 2027-10-10 (+166d) | 2027-04-28 → 2027-10-11 (+166d) |  | resources Skilled labor [7.95 h]; Unskilled Labor [7.95 h]; Equipment Opreator [16.01 h]; Excavator-Poclain [7.95 h]; Dump Truck [7.95 h]; Lighting poles single arms, height of ( 10 ) meters [1.1 Unit] → Skilled labor [7.95 h]; Unskilled Labor [7.95 h]; Equipment Opreator [16 h]; Excavator-Poclain [7.95 h]; Dump Truck [7.95 h]; Lighting poles single arms, height of ( 10 ) meters [1.1 Unit] |
| RHD4CZ7RA03SL1200 | Installation for RC Base for Lighting Poles for Street Lighting Network - (ROUND-03)-Z7-RA03-SL | 2027-04-29 → 2027-10-12 (+166d) | 2027-05-01 → 2027-10-13 (+165d) |  | resources Skilled labor [7.95 h]; Unskilled Labor [7.95 h]; Equipment Opreator [16.01 h]; Excavator-Poclain [7.95 h]; Dump Truck [7.95 h]; Lighting poles single arms, height of ( 10 ) meters [2.75 Unit] → Skilled labor [7.95 h]; Unskilled Labor [7.95 h]; Equipment Opreator [16 h]; Excavator-Poclain [7.95 h]; Dump Truck [7.95 h]; Lighting poles single arms, height of ( 10 ) meters [2.75 Unit] |
| RHD4CZ7RA03SL1300 | Backfill for RC Base for Lighting Poles for Street Lighting Network - (ROUND-03)-Z7-RA03-SL | 2027-05-02 → 2027-10-14 (+165d) | 2027-05-03 → 2027-10-16 (+166d) |  | resources Skilled labor [7.95 h]; Unskilled Labor [7.95 h]; Equipment Opreator [16.01 h]; Excavator-Poclain [7.95 h]; Dump Truck [7.95 h]; Lighting poles single arms, height of ( 10 ) meters [0.55 Unit] → Skilled labor [7.95 h]; Unskilled Labor [7.95 h]; Equipment Opreator [16 h]; Excavator-Poclain [7.95 h]; Dump Truck [7.95 h]; Lighting poles single arms, height of ( 10 ) meters [0.55 Unit] |
| RHD4CZ7RA03SL1400 | Installation for Lighting Poles for Street Lighting Network - (ROUND-03)-Z7-RA03-SL | 2027-05-04 → 2027-10-17 (+166d) | 2027-05-05 → 2027-10-18 (+166d) |  | resources Skilled labor [11.98 h]; Unskilled Labor [11.98 h]; Electrician [11.98 h]; Equipment Opreator [11.98 h]; Boom Truck [11.98 h]; Lighting poles single arms, height of ( 10 ) meters [6.6 Unit] → Skilled labor [12 h]; Unskilled Labor [12 h]; Electrician [12 h]; Equipment Opreator [12 h]; Boom Truck [12 h]; Lighting poles single arms, height of ( 10 ) meters [6.6 Unit] |
| RHD4CZ7RA03SL1500 | Luminaire Installation for Lighting Poles for Street Lighting Network - (ROUND-03)-Z7-RA03-SL | 2027-05-06 → 2027-10-19 (+166d) | 2027-05-08 → 2027-10-20 (+165d) |  | resources Unskilled Labor [16.01 h]; Electrician [7.95 h]; Equipment Opreator [1.63 h]; Boom Truck [3.16 h]; Street Lighting( LED) Luminaire of Output ?10898 lumen [11 Unit] → Unskilled Labor [16 h]; Electrician [7.95 h]; Equipment Opreator [1.6 h]; Boom Truck [3.16 h]; Street Lighting( LED) Luminaire of Output ?10898 lumen [11 Unit] |
| 5780 | **RHD4-02-002-RA03-(SL)-Street Lighting Feeder Pillars** | 2027-05-09 → 2027-10-21 (+165d) | 2027-05-19 → 2027-10-27 (+161d) |  |  |
| RHD4CZ7RA03SL4100 | Leveling for Distribution Pillars for Street Lighting Network - (ROUND-03)-Z7-RA03-SL | 2027-05-09 → 2027-10-21 (+165d) | 2027-05-10 → 2027-10-23 (+166d) |  |  |
| RHD4CZ7RA03SL4200 | Lean Concrete for Distribution Pillars for Street Lighting Network - (ROUND-03)-Z7-RA03-SL | 2027-05-11 → 2027-10-24 (+166d) | 2027-05-12 → 2027-10-25 (+166d) |  |  |
| RHD4CZ7RA03SL4300 | Installation of Distribution Pillars for Street Lighting Network - (ROUND-03)-Z7-RA03-SL | 2027-05-13 → 2027-10-26 (+166d) | 2027-05-19 → 2027-10-27 (+161d) |  |  |
| 5781 | **RHD4-02-002-RA03-(SL)-Street Lighting Earthing System** | 2027-05-20 → 2027-10-28 (+161d) | 2027-05-22 → 2027-10-30 (+161d) |  |  |
| RHD4CZ7RA03SL6100 | Installation of Earthing for Lighting Poles and Fedder Pillers for Street Lighting Network - (ROUND-03)-Z7-RA03-SL | 2027-05-20 → 2027-10-28 (+161d) | 2027-05-22 → 2027-10-30 (+161d) |  | resources Skilled labor [0.76 h]; Unskilled Labor [0.76 h]; Equipment Opreator [1.42 h]; Excavator-Poclain [0.76 h]; Dump Truck [0.76 h]; Street Lighting Feeder pillars - ER [1 Unit] → Skilled labor [0.8 h]; Unskilled Labor [0.8 h]; Equipment Opreator [1.42 h]; Excavator-Poclain [0.8 h]; Dump Truck [0.8 h]; Street Lighting Feeder pillars - ER [1 Unit] |
| 489 | **RHD4-02-002-Z7-RA03-Telecommunications Network - TC** | 2026-08-05 → 2027-02-08 (+187d) | 2027-06-07 → 2027-11-16 (+162d) |  |  |
| 490 | **RHD4-02-002-C081-(TC)-Telecommunications Ducts** | 2027-05-23 → 2027-10-31 (+161d) | 2027-06-07 → 2027-11-16 (+162d) |  |  |
| RHD4CZ7RA03TC2100 | Excavation of HDPE Ducts for Telecom Network - (ROUND-03)-Z7-RA03-TC | 2027-05-23 → 2027-10-31 (+161d) | 2027-05-25 → 2027-11-02 (+161d) |  | resources Skilled labor [99.97 h]; Unskilled Labor [99.97 h]; Equipment Opreator [199.95 h]; Excavator-Poclain [99.97 h]; Dump Truck [99.97 h]; (6*50mm) HDPE ducts -TC [110.02 m] → Skilled labor [100 h]; Unskilled Labor [100 h]; Equipment Opreator [199.92 h]; Excavator-Poclain [100 h]; Dump Truck [100 h]; (6*50mm) HDPE ducts -TC [110.02 m] |
| RHD4CZ7RA03TC2200 | Installation of HDPE Ducts for Telecom Network - (ROUND-03)-Z7-RA03-TC | 2027-05-26 → 2027-11-03 (+161d) | 2027-05-31 → 2027-11-09 (+162d) |  | resources Carpenter [15.03 h]; Skilled labor [149.96 h]; Unskilled Labor [149.96 h]; Steel Fixer [15.03 h]; (6*50mm) HDPE ducts -TC [357.57 m] → Carpenter [15.04 h]; Skilled labor [150 h]; Unskilled Labor [150 h]; Steel Fixer [15.04 h]; (6*50mm) HDPE ducts -TC [357.57 m] |
| RHD4CZ7RA03TC2400 | Backfilling of HDPE Ducts for Telecom Network - (ROUND-03)-Z7-RA03-TC | 2027-06-05 → 2027-11-13 (+161d) | 2027-06-07 → 2027-11-16 (+162d) |  | resources Skilled labor [99.97 h]; Unskilled Labor [99.97 h]; Equipment Opreator [39.97 h]; Excavator-Poclain [39.97 h]; (6*50mm) HDPE ducts -TC [82.52 m] → Skilled labor [100 h]; Unskilled Labor [100 h]; Equipment Opreator [40 h]; Excavator-Poclain [40 h]; (6*50mm) HDPE ducts -TC [82.52 m] |
| 491 | **RHD4-02-002-C081-(TC)-Telecommunications Manholes** | 2027-05-26 → 2027-11-03 (+161d) | 2027-06-03 → 2027-11-11 (+161d) |  |  |
| RHD4CZ7RA03TC5100 | Excavation for Manholes for Telecom Network - (ROUND-03)-Z7-RA03-TC | 2027-05-26 → 2027-11-03 (+161d) | 2027-05-30 → 2027-11-07 (+161d) |  | resources Skilled labor [13.61 h]; Unskilled Labor [13.61 h]; Equipment Opreator [10.89 h]; Excavator-Poclain [5.45 h]; Dump Truck [5.45 h]; Manhole Type 1 - TC [0.45 nr]; Manhole Type 2 - TC [0.3 nr] → Skilled labor [13.6 h]; Unskilled Labor [13.6 h]; Equipment Opreator [10.88 h]; Excavator-Poclain [5.44 h]; Dump Truck [5.44 h]; Manhole Type 1 - TC [0.45 nr]; Manhole Type 2 - TC [0.3 nr] |
| RHD4CZ7RA03TC5200 | Installation of Manholes for Telecom Network - (ROUND-03)-Z7-RA03-TC | 2027-05-31 → 2027-11-08 (+161d) | 2027-06-03 → 2027-11-11 (+161d) |  | resources Skilled labor [13.61 h]; Unskilled Labor [13.61 h]; Equipment Opreator [5.45 h]; Boom Truck [5.45 h]; Manhole Type 1 - TC [2.55 nr]; Manhole Type 2 - TC [1.7 nr] → Skilled labor [13.6 h]; Unskilled Labor [13.6 h]; Equipment Opreator [5.44 h]; Boom Truck [5.44 h]; Manhole Type 1 - TC [2.55 nr]; Manhole Type 2 - TC [1.7 nr] |
| 5411 | **RHD4-02-002-C081-(TC)-Telecomminications Road Crossings** | 2026-08-05 → 2027-02-08 (+187d) | 2026-08-13 → 2027-02-16 (+187d) |  |  |
| RHD4CZ7RA03TC3100 | Excavation for Road Crossings for Telecom Network - (ROUND-03)-Z7-RA03-TC | 2026-08-05 → 2027-02-08 (+187d) | 2026-08-06 → 2027-02-09 (+187d) |  | resources Skilled labor [9.37 h]; Unskilled Labor [9.37 h]; Equipment Opreator [18.73 h]; Excavator-Poclain [9.37 h]; Dump Truck [9.37 h]; Road crossing ducts, (6*50mm) HDPE -TC [1.72 m] → Skilled labor [9.36 h]; Unskilled Labor [9.36 h]; Equipment Opreator [18.72 h]; Excavator-Poclain [9.36 h]; Dump Truck [9.36 h]; Road crossing ducts, (6*50mm) HDPE -TC [1.72 m] |
| RHD4CZ7RA03TC3200 | Installation of Road Crossings for Telecom Network - (ROUND-03)-Z7-RA03-TC | 2026-08-08 → 2027-02-10 (+186d) | 2026-08-09 → 2027-02-13 (+188d) | 2d → 2.01d | resources Carpenter [1.2 h]; Skilled labor [12.52 h]; Unskilled Labor [12.52 h]; Steel Fixer [1.2 h]; Road crossing ducts, (6*50mm) HDPE -TC [1.72 m] → Carpenter [1.2 h]; Skilled labor [12.56 h]; Unskilled Labor [12.56 h]; Steel Fixer [1.2 h]; Road crossing ducts, (6*50mm) HDPE -TC [1.72 m] |
| RHD4CZ7RA03TC3300 | Pouring of Road Crossings for Telecom Network - (ROUND-03)-Z7-RA03-TC | 2026-08-10 → 2027-02-13 (+187d) | 2026-08-11 → 2027-02-15 (+188d) | 2d → 2.01d | resources Skilled labor [12.52 h]; Unskilled Labor [12.52 h]; Equipment Opreator [5.01 h]; Concrete Mixer Truck [2.5 h]; Concrete Pump [2.5 h]; Road crossing ducts, (6*50mm) HDPE -TC [11.18 m] → Skilled labor [12.56 h]; Unskilled Labor [12.56 h]; Equipment Opreator [5.04 h]; Concrete Mixer Truck [2.48 h]; Concrete Pump [2.48 h]; Road crossing ducts, (6*50mm) HDPE -TC [11.18 m] |
| RHD4CZ7RA03TC3400 | Backfilling of Road Crossings for Telecom Network - (ROUND-03)-Z7-RA03-TC | 2026-08-12 → 2027-02-15 (+187d) | 2026-08-13 → 2027-02-16 (+187d) |  | resources Skilled labor [9.37 h]; Unskilled Labor [9.37 h]; Equipment Opreator [3.7 h]; Excavator-Poclain [3.7 h]; Road crossing ducts, (6*50mm) HDPE -TC [2.58 m] → Skilled labor [9.36 h]; Unskilled Labor [9.36 h]; Equipment Opreator [3.68 h]; Excavator-Poclain [3.68 h]; Road crossing ducts, (6*50mm) HDPE -TC [2.58 m] |
| 5791 | **RHD4-02-002-Z7-RA03-Information and Communication Technologies - ICT** | 2027-05-23 → 2027-10-31 (+161d) | 2027-06-06 → 2027-11-14 (+161d) |  |  |
| 5792 | **RHD4-02-002-RA03-(ICT)-Information and Communication Technologies Ducts** | 2027-05-23 → 2027-10-31 (+161d) | 2027-06-06 → 2027-11-14 (+161d) |  |  |
| RHD4CZ7RA03ICT2100 | Excavation of HDPE Ducts for ICT Network - (ROUND-03)-Z7-RA03-ICT | 2027-05-23 → 2027-10-31 (+161d) | 2027-05-26 → 2027-11-03 (+161d) |  |  |
| RHD4CZ7RA03ICT2200 | Installation of HDPE Ducts for ICT Network - (ROUND-03)-Z7-RA03-ICT | 2027-05-27 → 2027-11-04 (+161d) | 2027-06-01 → 2027-11-09 (+161d) |  |  |
| RHD4CZ7RA03ICT2400 | Backfilling of HDPE Ducts for ICT Network - (ROUND-03)-Z7-RA03-ICT | 2027-06-02 → 2027-11-10 (+161d) | 2027-06-06 → 2027-11-14 (+161d) |  |  |
| 5795 | **RHD4-02-002-Z7-RA03-Security Network - CCTV** | 2027-06-08 → 2027-11-16 (+161d) | 2027-08-23 → 2028-01-29 (+159d) |  |  |
| 5796 | **RHD4-02-002-RA03-(CCTV)-Civil Works** | 2027-06-08 → 2027-11-16 (+161d) | 2027-06-19 → 2027-11-27 (+161d) |  |  |
| RHD4CZ7RA03CCTV2100 | Civil Works for Security Network - (ROUND-03)-Z7-RA03-CCTV | 2027-06-08 → 2027-11-16 (+161d) | 2027-06-19 → 2027-11-27 (+161d) |  |  |
| 5797 | **RHD4-02-002-RA03-(CCTV)-CCTV Poles** | 2027-08-01 → 2028-01-06 (+158d) | 2027-08-11 → 2028-01-17 (+159d) |  |  |
| RHD4CZ7RA03CCTV1100 | Excavation for RC Base for CCTV Poles for Security Network - (ROUND-03)-Z7-RA03-CCTV | 2027-08-01 → 2028-01-06 (+158d) | 2027-08-02 → 2028-01-08 (+159d) |  |  |
| RHD4CZ7RA03CCTV1200 | Installation for RC Base for CCTV Poles for Security Network - (ROUND-03)-Z7-RA03-CCTV | 2027-08-03 → 2028-01-09 (+159d) | 2027-08-04 → 2028-01-10 (+159d) |  |  |
| RHD4CZ7RA03CCTV1300 | Backfill for RC Base for CCTV Poles for Security Network - (ROUND-03)-Z7-RA03-CCTV | 2027-08-05 → 2028-01-11 (+159d) | 2027-08-07 → 2028-01-12 (+158d) |  |  |
| RHD4CZ7RA03CCTV1400 | Installation for CCTV Poles for Security Network - (ROUND-03)-Z7-RA03-CCTV | 2027-08-08 → 2028-01-13 (+158d) | 2027-08-09 → 2028-01-15 (+159d) |  |  |
| RHD4CZ7RA03CCTV1500 | Protection post Installation for CCTV Poles for Security Network - (ROUND-03)-Z7-RA03-CCTV | 2027-08-10 → 2028-01-16 (+159d) | 2027-08-11 → 2028-01-17 (+159d) |  |  |
| 5798 | **RHD4-02-002-RA03-(CCTV)-Camera** | 2027-08-12 → 2028-01-18 (+159d) | 2027-08-14 → 2028-01-19 (+158d) |  |  |
| RHD4CZ7RA03CCTV3100 | Installation for Cameras for Security Network - (ROUND-03)-Z7-RA03-CCTV | 2027-08-12 → 2028-01-18 (+159d) | 2027-08-14 → 2028-01-19 (+158d) |  |  |
| 5799 | **RHD4-02-002-RA03-(CCTV)-Power and Infrastructure** | 2027-08-10 → 2028-01-16 (+159d) | 2027-08-14 → 2028-01-19 (+158d) |  |  |
| RHD4CZ7RA03CCTV4100 | Installation of Power outlet, UPS and midspan for PTZ Camerafor Cameras for Security Network - (ROUND-03)-Z7-RA03-CCTV | 2027-08-10 → 2028-01-16 (+159d) | 2027-08-11 → 2028-01-17 (+159d) |  |  |
| RHD4CZ7RA03CCTV4200 | Short Range Wireless PoP wireless Bridgefor CCTV Poles for Security Network - (ROUND-03)-Z7-RA03-CCTV | 2027-08-12 → 2028-01-18 (+159d) | 2027-08-14 → 2028-01-19 (+158d) |  |  |
| 5801 | **RHD4-02-002-RA03-(CCTV)-CCTV Panels and Components** | 2027-08-15 → 2028-01-20 (+158d) | 2027-08-23 → 2028-01-29 (+159d) |  |  |
| RHD4CZ7RA03CCTV6100 | Installation for CCTV Panels for Security Network - (ROUND-03)-Z7-RA03-CCTV | 2027-08-15 → 2028-01-20 (+158d) | 2027-08-23 → 2028-01-29 (+159d) |  |  |
| 5812 | **RHD4-02-002-Z7-RA05** | 2026-08-31 → 2027-02-13 (+166d) | 2027-06-16 → 2027-12-15 (+182d) |  |  |

| ID | Task | Start | Finish | Duration | Other |
| --- | --- | --- | --- | --- | --- |
| 5991 | **RHD4-02-002-Z7-RA05-Road Works - RD** | 2026-09-01 → 2027-03-06 (+186d) | 2027-06-16 → 2027-12-15 (+182d) |  |  |
| 5992 | **RHD4-02-002-RA05-(RD)-Subgrade** | 2026-09-01 → 2027-03-06 (+186d) | 2026-09-05 → 2027-03-14 (+190d) |  |  |
| RHD4CZ7RA05RD1100 | Supply, lay and compaction subgrade compacted thickness 300 mm for Roads - (ROUND-05)-Z7-RA05-RD | 2026-09-01 → 2027-03-06 (+186d) | 2026-09-05 → 2027-03-14 (+190d) | 4d → 5d | resources Skilled labor [51.84 h]; Unskilled Labor [103.79 h]; Electrician [51.84 h]; Equipment Opreator [354.37 h]; Water Truck [17.1 h]; Roller compactor [25.92 h]; Grader [51.84 h]; Dump Truck [259.41 h]; Subgrade [2495.29 m3] → Skilled labor [51.84 h]; Unskilled Labor [103.79 h]; Electrician [51.84 h]; Equipment Opreator [354.4 h]; Water Truck [17.1 h]; Roller compactor [25.92 h]; Grader [51.84 h]; Dump Truck [259.41 h]; Subgrade [2495.29 m3] |
| 5993 | **RHD4-02-002-RA05-(RD)-Aggregate Base Course** | 2026-09-06 → 2027-03-15 (+190d) | 2026-09-09 → 2027-03-18 (+190d) |  |  |
| RHD4CZ7RA05RD2100 | Supply, lay and compaction Aggregate base course compacted thickness 300 mmfor Roads - (ROUND-05)-Z7-RA05-RD | 2026-09-06 → 2027-03-15 (+190d) | 2026-09-09 → 2027-03-18 (+190d) |  | resources Skilled labor [19.17 h]; Unskilled Labor [38.44 h]; Equipment Opreator [243.29 h]; Water Truck [12.63 h]; Roller compactor [38.44 h]; Grader [38.44 h]; Dump Truck [153.77 h]; Aggregate Base Courses [1567.29 m3] → Skilled labor [19.2 h]; Unskilled Labor [38.44 h]; Equipment Opreator [243.29 h]; Water Truck [12.63 h]; Roller compactor [38.44 h]; Grader [38.44 h]; Dump Truck [153.77 h]; Aggregate Base Courses [1567.29 m3] |
| 5994 | **RHD4-02-002-RA05-(RD)-Bituminous base course Two Layers, including (MC1)&(RC2)** | 2026-09-10 → 2027-03-20 (+191d) | 2027-05-27 → 2027-11-25 (+182d) |  |  |
| RHD4CZ7RA05RD3100 | Supply, lay and Asphaltic base course including Prime Coat (MC1) for 1st Layer - (ROUND-05)-Z7-RA05-RD | 2026-09-10 → 2027-03-20 (+191d) | 2026-09-12 → 2027-03-21 (+190d) |  |  |
| RHD4CZ7RA05RD3200 | Supply, lay and Asphaltic base course including Tack Coat (RC2) for 2nd Layer - (ROUND-05)-Z7-RA05-RD | 2027-05-26 → 2027-11-24 (+182d) | 2027-05-27 → 2027-11-25 (+182d) |  |  |
| 5996 | **RHD4-02-002-RA05-(RD)-Precast Concrete Curb** | 2027-05-29 → 2027-11-27 (+182d) | 2027-06-01 → 2027-11-30 (+182d) |  |  |
| RHD4CZ7RA05RD5100 | Supply and installation Precast Concrete Kerb for Roads - (ROUND-05)-Z7-RA05-RD | 2027-05-29 → 2027-11-27 (+182d) | 2027-06-01 → 2027-11-30 (+182d) |  |  |
| 5999 | **RHD4-02-002-RA05-(RD)-Traffic Signage** | 2027-06-02 → 2027-12-01 (+182d) | 2027-06-12 → 2027-12-11 (+182d) |  |  |
| RHD4CZ7RA05RD8100 | Installation of Traffic Signage for Road Network - (ROUND-05)-Z7-RA05-RD | 2027-06-02 → 2027-12-01 (+182d) | 2027-06-12 → 2027-12-11 (+182d) |  | resources Skilled labor [196.03 h]; Unskilled Labor [98.01 h]; Electrician [42.47 h]; Equipment Opreator [36.59 h]; Boom Truck [19.6 h]; Concrete Mixer Truck [16.99 h]; Traffic signs, ground mounted, 1 Sheet Aluminium, (breakaway)Single post [10 nr]; Traffic signs, ground mounted, 2 Sheets Aluminium, (breakaway)Single post [10 nr]; Traffic signs, ground mounted, 1 Sheets Aluminium, (breakaway)Double post [3 nr] → Skilled labor [196 h]; Unskilled Labor [98.01 h]; Electrician [42.47 h]; Equipment Opreator [36.59 h]; Boom Truck [19.6 h]; Concrete Mixer Truck [16.99 h]; Traffic signs, ground mounted, 1 Sheet Aluminium, (breakaway)Single post [10 nr]; Traffic signs, ground mounted, 2 Sheets Aluminium, (breakaway)Single post [10 nr]; Traffic signs, ground mounted, 1 Sheets Aluminium, (breakaway)Double post [3 nr] |
| 5995 | **RHD4-02-002-RA05-(RD)-Bituminous concrete wearing course including tack coat (RC2)** | 2027-06-02 → 2027-12-01 (+182d) | 2027-06-03 → 2027-12-02 (+182d) |  |  |
| RHD4CZ7RA05RD4100 | Supply, lay and compaction Asphaltic wearing course including tack Coat (RC2)for Road Network - (ROUND-05)-Z7-RA05-RD | 2027-06-02 → 2027-12-01 (+182d) | 2027-06-03 → 2027-12-02 (+182d) |  |  |
| 6000 | **RHD4-02-002-RA05-(RD)-Speed Table and Wheel Stopper** | 2027-06-05 → 2027-12-04 (+182d) | 2027-06-13 → 2027-12-12 (+182d) |  |  |
| RHD4CZ7RA05RD9100 | Installation for Speed Bump for Road Network - (ROUND-05)-Z7-RA05-RD | 2027-06-05 → 2027-12-04 (+182d) | 2027-06-13 → 2027-12-12 (+182d) |  |  |
| 5998 | **RHD4-02-002-RA05-(RD)-Pavement Marking** | 2027-06-14 → 2027-12-13 (+182d) | 2027-06-16 → 2027-12-15 (+182d) |  |  |
| RHD4CZ7RA05RD7100 | Pavement Markings for Road Network - (ROUND-05)-Z7-RA05-RD | 2027-06-14 → 2027-12-13 (+182d) | 2027-06-16 → 2027-12-15 (+182d) |  |  |
| 5964 | **RHD4-02-002-Z7-RA05-Street Lighting Network - SL** | 2026-08-31 → 2027-02-13 (+166d) | 2026-10-11 → 2027-04-18 (+189d) |  |  |
| 5965 | **RHD4-02-002-RA05-(SL)-Street Lighting duct banks** | 2026-08-31 → 2027-02-13 (+166d) | 2026-09-08 → 2027-02-21 (+166d) |  |  |
| RHD4CZ7RA05SL2100 | Excavation of Duct Banks for Street Lighting Network - (ROUND-05)-Z7-RA05-SL | 2026-08-31 → 2027-02-13 (+166d) | 2026-09-01 → 2027-02-14 (+166d) |  | resources Skilled labor [11.98 h]; Unskilled Labor [11.98 h]; Equipment Opreator [23.85 h]; Excavator-Poclain [11.98 h]; Dump Truck [11.98 h]; Road Crossing Duct for Street Lighting cables UPVC (2x?110mm) [1.64 m] → Skilled labor [12 h]; Unskilled Labor [12 h]; Equipment Opreator [23.85 h]; Excavator-Poclain [12 h]; Dump Truck [12 h]; Road Crossing Duct for Street Lighting cables UPVC (2x?110mm) [1.64 m] |
| RHD4CZ7RA05SL2200 | Installation of Duct Banks for Street Lighting Network - (ROUND-05)-Z7-RA05-SL | 2026-09-02 → 2027-02-15 (+166d) | 2026-09-03 → 2027-02-16 (+166d) |  |  |
| RHD4CZ7RA05SL2300 | Pouring of Duct Banks for Street Lighting Network - (ROUND-05)-Z7-RA05-SL | 2026-09-05 → 2027-02-17 (+165d) | 2026-09-06 → 2027-02-18 (+165d) |  | resources Skilled labor [11.98 h]; Unskilled Labor [11.98 h]; Equipment Opreator [4.79 h]; Concrete Mixer Truck [2.4 h]; Concrete Pump [2.4 h]; Road Crossing Duct for Street Lighting cables UPVC (2x?110mm) [10.68 m] → Skilled labor [12 h]; Unskilled Labor [12 h]; Equipment Opreator [4.8 h]; Concrete Mixer Truck [2.4 h]; Concrete Pump [2.4 h]; Road Crossing Duct for Street Lighting cables UPVC (2x?110mm) [10.68 m] |
| RHD4CZ7RA05SL2400 | Backfilling of Duct Banks for Street Lighting Network - (ROUND-05)-Z7-RA05-SL | 2026-09-07 → 2027-02-20 (+166d) | 2026-09-08 → 2027-02-21 (+166d) |  |  |
| 5966 | **RHD4-02-002-RA05-(SL)-Street Lighting Drawpit** | 2026-09-13 → 2027-03-22 (+190d) | 2026-09-16 → 2027-03-25 (+190d) |  |  |
| RHD4CZ7RA05SL5100 | Excavation of Drawpit size 600x600x900mm for Street Lighting Network - (ROUND-05)-Z7-RA05-SL | 2026-09-13 → 2027-03-22 (+190d) | 2026-09-14 → 2027-03-23 (+190d) |  | resources Skilled labor [0.87 h]; Unskilled Labor [0.87 h]; Equipment Opreator [0.76 h]; Excavator-Poclain [0.33 h]; Dump Truck [0.33 h]; Drawpit with medium duty steel cover, size600x600x900mm, [0.15 Unit] → Skilled labor [0.87 h]; Unskilled Labor [0.87 h]; Equipment Opreator [0.8 h]; Excavator-Poclain [0.33 h]; Dump Truck [0.33 h]; Drawpit with medium duty steel cover, size600x600x900mm, [0.15 Unit] |
| RHD4CZ7RA05SL5200 | Installation of Drawpit size 600x600x900mm for Street Lighting Network - (ROUND-05)-Z7-RA05-SL | 2026-09-15 → 2027-03-24 (+190d) | 2026-09-16 → 2027-03-25 (+190d) |  |  |
| 5967 | **RHD4-02-002-RA05-(SL)-Street Lighting cables** | 2026-09-17 → 2027-03-27 (+191d) | 2026-09-27 → 2027-04-04 (+189d) |  |  |
| RHD4CZ7RA05SL3100 | Excavation for Street Lighting Cables for Street Lighting Network - (ROUND-05)-Z7-RA05-SL | 2026-09-17 → 2027-03-27 (+191d) | 2026-09-19 → 2027-03-28 (+190d) |  |  |
| RHD4CZ7RA05SL3200 | Cable Laying of Street Lighting Cables for Street Lighting Network - (ROUND-05)-Z7-RA05-SL | 2026-09-20 → 2027-03-29 (+190d) | 2026-09-21 → 2027-03-30 (+190d) |  |  |
| RHD4CZ7RA05SL3300 | Warning tape and Backfill for Street Lighting Cables for Street Lighting Network - (ROUND-05)-Z7-RA05-SL | 2026-09-22 → 2027-03-31 (+190d) | 2026-09-24 → 2027-04-01 (+189d) |  |  |
| RHD4CZ7RA05SL3400 | Testing of Street Lighting Cables for Street Lighting Network - (ROUND-05)-Z7-RA05-SL | 2026-09-26 → 2027-04-03 (+189d) | 2026-09-27 → 2027-04-04 (+189d) |  |  |
| 5968 | **RHD4-02-002-RA05-(SL)-Street Lighting Poles** | 2026-09-28 → 2027-04-05 (+189d) | 2026-10-11 → 2027-04-18 (+189d) |  |  |
| RHD4CZ7RA05SL1100 | Excavation for RC Base for Lighting Poles for Street Lighting Network - (ROUND-05)-Z7-RA05-SL | 2026-09-28 → 2027-04-05 (+189d) | 2026-09-29 → 2027-04-06 (+189d) |  | resources Skilled labor [7.95 h]; Unskilled Labor [7.95 h]; Equipment Opreator [16.01 h]; Excavator-Poclain [7.95 h]; Dump Truck [7.95 h]; Lighting poles single arms, height of ( 10 ) meters [1.1 Unit] → Skilled labor [7.95 h]; Unskilled Labor [7.95 h]; Equipment Opreator [16 h]; Excavator-Poclain [7.95 h]; Dump Truck [7.95 h]; Lighting poles single arms, height of ( 10 ) meters [1.1 Unit] |
| RHD4CZ7RA05SL1200 | Installation for RC Base for Lighting Poles for Street Lighting Network - (ROUND-05)-Z7-RA05-SL | 2026-09-30 → 2027-04-07 (+189d) | 2026-10-01 → 2027-04-08 (+189d) |  | resources Skilled labor [7.95 h]; Unskilled Labor [7.95 h]; Equipment Opreator [16.01 h]; Excavator-Poclain [7.95 h]; Dump Truck [7.95 h]; Lighting poles single arms, height of ( 10 ) meters [2.75 Unit] → Skilled labor [7.95 h]; Unskilled Labor [7.95 h]; Equipment Opreator [16 h]; Excavator-Poclain [7.95 h]; Dump Truck [7.95 h]; Lighting poles single arms, height of ( 10 ) meters [2.75 Unit] |
| RHD4CZ7RA05SL1300 | Backfill for RC Base for Lighting Poles for Street Lighting Network - (ROUND-05)-Z7-RA05-SL | 2026-10-03 → 2027-04-10 (+189d) | 2026-10-04 → 2027-04-11 (+189d) |  | resources Skilled labor [7.95 h]; Unskilled Labor [7.95 h]; Equipment Opreator [16.01 h]; Excavator-Poclain [7.95 h]; Dump Truck [7.95 h]; Lighting poles single arms, height of ( 10 ) meters [0.55 Unit] → Skilled labor [7.95 h]; Unskilled Labor [7.95 h]; Equipment Opreator [16 h]; Excavator-Poclain [7.95 h]; Dump Truck [7.95 h]; Lighting poles single arms, height of ( 10 ) meters [0.55 Unit] |
| RHD4CZ7RA05SL1400 | Installation for Lighting Poles for Street Lighting Network - (ROUND-05)-Z7-RA05-SL | 2026-10-05 → 2027-04-12 (+189d) | 2026-10-06 → 2027-04-13 (+189d) |  | resources Skilled labor [11.98 h]; Unskilled Labor [11.98 h]; Electrician [11.98 h]; Equipment Opreator [11.98 h]; Boom Truck [11.98 h]; Lighting poles single arms, height of ( 10 ) meters [6.6 Unit] → Skilled labor [12 h]; Unskilled Labor [12 h]; Electrician [12 h]; Equipment Opreator [12 h]; Boom Truck [12 h]; Lighting poles single arms, height of ( 10 ) meters [6.6 Unit] |
| RHD4CZ7RA05SL1500 | Luminaire Installation for Lighting Poles for Street Lighting Network - (ROUND-05)-Z7-RA05-SL | 2026-10-10 → 2027-04-17 (+189d) | 2026-10-11 → 2027-04-18 (+189d) |  | resources Unskilled Labor [16.01 h]; Electrician [7.95 h]; Equipment Opreator [1.63 h]; Boom Truck [3.16 h]; Street Lighting( LED) Luminaire of Output ?10898 lumen [11 Unit] → Unskilled Labor [16 h]; Electrician [7.95 h]; Equipment Opreator [1.6 h]; Boom Truck [3.16 h]; Street Lighting( LED) Luminaire of Output ?10898 lumen [11 Unit] |
| 5970 | **RHD4-02-002-RA05-(SL)-Street Lighting Earthing System** | 2026-10-07 → 2027-04-14 (+189d) | 2026-10-08 → 2027-04-15 (+189d) |  |  |
| RHD4CZ7RA05SL6100 | Installation of Earthing for Lighting Poles and Fedder Pillers for Street Lighting Network - (ROUND-05)-Z7-RA05-SL | 2026-10-07 → 2027-04-14 (+189d) | 2026-10-08 → 2027-04-15 (+189d) |  | resources Skilled labor [0.76 h]; Unskilled Labor [0.76 h]; Equipment Opreator [1.42 h]; Excavator-Poclain [0.76 h]; Dump Truck [0.76 h]; Including lighting poles circuits - ER [1 Unit] → Skilled labor [0.8 h]; Unskilled Labor [0.8 h]; Equipment Opreator [1.42 h]; Excavator-Poclain [0.8 h]; Dump Truck [0.8 h]; Including lighting poles circuits - ER [1 Unit] |
| 489 | **RHD4-02-002-Z1-C081-Telecommunications Network - TC** | 2026-10-10 → 2027-04-17 (+189d) | 2026-10-26 → 2027-05-04 (+190d) |  |  |
| 490 | **RHD4-02-002-C081-(TC)-Telecommunications Ducts** | 2026-10-10 → 2027-04-17 (+189d) | 2026-10-26 → 2027-05-04 (+190d) |  |  |
| RHD4CZ7RA05TC2100 | Excavation of HDPE Ducts for Telecom Network - (RD-C-8 /1)-Z1-C081-TC | 2026-10-10 → 2027-04-17 (+189d) | 2026-10-14 → 2027-04-22 (+190d) |  | resources Skilled labor [99.97 h]; Unskilled Labor [99.97 h]; Equipment Opreator [199.95 h]; Excavator-Poclain [99.97 h]; Dump Truck [99.97 h]; (6*50mm) HDPE ducts -TC [41.96 m] → Skilled labor [100 h]; Unskilled Labor [100 h]; Equipment Opreator [199.92 h]; Excavator-Poclain [100 h]; Dump Truck [100 h]; (6*50mm) HDPE ducts -TC [41.96 m] |
| RHD4CZ7RA05TC2200 | Installation of HDPE Ducts for Telecom Network - (RD-C-8 /1)-Z1-C081-TC | 2026-10-15 → 2027-04-22 (+189d) | 2026-10-20 → 2027-04-28 (+190d) |  | resources Carpenter [15.03 h]; Skilled labor [149.96 h]; Unskilled Labor [149.96 h]; Steel Fixer [15.03 h]; (6*50mm) HDPE ducts -TC [136.37 m] → Carpenter [15.04 h]; Skilled labor [150 h]; Unskilled Labor [150 h]; Steel Fixer [15.04 h]; (6*50mm) HDPE ducts -TC [136.37 m] |
| RHD4CZ7RA05TC2400 | Backfilling of HDPE Ducts for Telecom Network - (RD-C-8 /1)-Z1-C081-TC | 2026-10-21 → 2027-04-28 (+189d) | 2026-10-26 → 2027-05-04 (+190d) |  | resources Skilled labor [99.97 h]; Unskilled Labor [99.97 h]; Equipment Opreator [39.97 h]; Excavator-Poclain [39.97 h]; (6*50mm) HDPE ducts -TC [31.47 m] → Skilled labor [100 h]; Unskilled Labor [100 h]; Equipment Opreator [40 h]; Excavator-Poclain [40 h]; (6*50mm) HDPE ducts -TC [31.47 m] |
| 5980 | **RHD4-02-002-Z7-RA05-Information and Communication Technologies - ICT** | 2026-10-12 → 2027-04-19 (+189d) | 2026-11-01 → 2027-05-09 (+189d) |  |  |
| 5981 | **RHD4-02-002-RA05-(ICT)-Information and Communication Technologies Ducts** | 2026-10-12 → 2027-04-19 (+189d) | 2026-11-01 → 2027-05-09 (+189d) |  |  |
| RHD4CZ7RA05ICT2100 | Excavation of HDPE Ducts for ICT Network - (ROUND-05)-Z7-RA05-ICT | 2026-10-12 → 2027-04-19 (+189d) | 2026-10-17 → 2027-04-24 (+189d) |  |  |
| RHD4CZ7RA05ICT2200 | Installation of HDPE Ducts for ICT Network - (ROUND-05)-Z7-RA05-ICT | 2026-10-18 → 2027-04-25 (+189d) | 2026-10-25 → 2027-05-02 (+189d) |  |  |
| RHD4CZ7RA05ICT2400 | Backfilling of HDPE Ducts for ICT Network - (ROUND-05)-Z7-RA05-ICT | 2026-10-27 → 2027-05-04 (+189d) | 2026-11-01 → 2027-05-09 (+189d) |  |  |
| 703 | **RHD4-02-002-Z2** | 2026-08-17 → 2026-08-04 (-13d) | 2027-09-11 → 2028-03-28 (+199d) |  |  |
| 893 | **RHD4-02-002-Z2-L102** | 2026-08-17 → 2026-08-04 (-13d) | 2027-09-06 → 2028-03-23 (+199d) |  |  |
| 1072 | **RHD4-02-002-Z2-L102-Road Works - RD** | 2026-09-03 → 2027-01-12 (+131d) | 2027-09-06 → 2028-03-23 (+199d) |  |  |
| 1073 | **RHD4-02-002-L102-(RD)-Subgrade** | 2026-09-03 → 2027-01-12 (+131d) | 2026-09-16 → 2027-01-25 (+131d) |  |  |
| RHD4CZ2L102RD1100 | Supply, lay and compaction subgrade compacted thickness 300 mm for Roads - (RD-L-10/2)-Z2-L102-RD | 2026-09-03 → 2027-01-12 (+131d) | 2026-09-16 → 2027-01-25 (+131d) |  |  |
| 1074 | **RHD4-02-002-L102-(RD)-Aggregate Base Course** | 2026-09-17 → 2027-01-26 (+131d) | 2026-09-28 → 2027-02-04 (+129d) |  |  |
| RHD4CZ2L102RD2100 | Supply, lay and compaction Aggregate base course compacted thickness 300 mmfor Roads - (RD-L-10/2)-Z2-L102-RD | 2026-09-17 → 2027-01-26 (+131d) | 2026-09-28 → 2027-02-04 (+129d) |  |  |
| 1075 | **RHD4-02-002-L102-(RD)-Bituminous base course Two Layers, including (MC1)&(RC2)** | 2026-09-29 → 2027-03-25 (+177d) | 2027-07-31 → 2028-02-10 (+194d) |  |  |
| RHD4CZ2L102RD3100 | Supply, lay and Asphaltic base course including Prime Coat (MC1) for 1st Layer - (RD-L-10/2)-Z2-L102-RD | 2026-09-29 → 2027-03-25 (+177d) | 2026-09-30 → 2027-03-27 (+178d) |  |  |
| RHD4CZ2L102RD3200 | Supply, lay and Asphaltic base course including Tack Coat (RC2) for 2nd Layer - (RD-L-10/2)-Z2-L102-RD | 2027-07-29 → 2028-02-09 (+195d) | 2027-07-31 → 2028-02-10 (+194d) |  |  |
| 1077 | **RHD4-02-002-L102-(RD)-Precast Concrete Curb** | 2027-08-01 → 2028-02-12 (+195d) | 2027-08-09 → 2028-02-20 (+195d) |  |  |
| RHD4CZ2L102RD5100 | Supply and installation Precast Concrete Kerb for Roads - (RD-L-10/2)-Z2-L102-RD | 2027-08-01 → 2028-02-12 (+195d) | 2027-08-09 → 2028-02-20 (+195d) |  |  |
| 1080 | **RHD4-02-002-L102-(RD)-Traffic Signage** | 2027-08-10 → 2028-02-21 (+195d) | 2027-08-16 → 2028-03-02 (+199d) |  |  |
| RHD4CZ2L102RD8100 | Installation of Traffic Signage for Road Network - (RD-L-10/2)-Z2-L102-RD | 2027-08-10 → 2028-02-21 (+195d) | 2027-08-16 → 2028-03-02 (+199d) |  |  |
| 1078 | **RHD4-02-002-L102-(RD)-Precast Interlocking Block Pavers** | 2027-08-17 → 2028-03-04 (+200d) | 2027-08-29 → 2028-03-15 (+199d) |  |  |
| RHD4CZ2L102RD6100 | Interlocking block pavers for sidewalk-footpath for Side walks and Parking areas - (RD-L-10/2)-Z2-L102-RD | 2027-08-17 → 2028-03-04 (+200d) | 2027-08-29 → 2028-03-15 (+199d) |  | resources Skilled labor [220.31 h]; Unskilled Labor [330.41 h]; Equipment Opreator [357.97 h]; Boom Truck [110.1 h]; Bobcat [110.1 h]; Concrete Mixer Truck [110.1 h]; Water Truck [27.55 h]; Interlock 80 mm thick Pavers for parking including sand fill [3540 m2] → Skilled labor [220.31 h]; Unskilled Labor [330.4 h]; Equipment Opreator [357.97 h]; Boom Truck [110.1 h]; Bobcat [110.1 h]; Concrete Mixer Truck [110.1 h]; Water Truck [27.55 h]; Interlock 80 mm thick Pavers for parking including sand fill [3540 m2] |
| 1076 | **RHD4-02-002-L102-(RD)-Bituminous concrete wearing course including tack coat (RC2)** | 2027-08-30 → 2028-03-16 (+199d) | 2027-08-31 → 2028-03-18 (+200d) |  |  |
| RHD4CZ2L102RD4100 | Supply, lay and compaction Asphaltic wearing course including tack Coat (RC2)for Road Network - (RD-L-10/2)-Z2-L102-RD | 2027-08-30 → 2028-03-16 (+199d) | 2027-08-31 → 2028-03-18 (+200d) |  |  |
| 1079 | **RHD4-02-002-L102-(RD)-Pavement Marking** | 2027-09-01 → 2028-03-19 (+200d) | 2027-09-06 → 2028-03-23 (+199d) |  |  |
| RHD4CZ2L102RD7100 | Pavement Markings for Road Network - (RD-L-10/2)-Z2-L102-RD | 2027-09-01 → 2028-03-19 (+200d) | 2027-09-06 → 2028-03-23 (+199d) |  | resources Skilled labor [50.42 h]; Unskilled Labor [100.84 h]; Equipment Opreator [50.42 h]; Road Marking Machine [50.42 h]; Retroreflective Thermoplastic White Traffic Markings [303.64 m2]; Retroreflective Thermoplastic Yellow, Traffic Markings [309.68 m2]; Retroreflective raised pavement markers (cat eyes) [580 nr] → Skilled labor [50.4 h]; Unskilled Labor [100.84 h]; Equipment Opreator [50.4 h]; Road Marking Machine [50.4 h]; Retroreflective Thermoplastic White Traffic Markings [303.64 m2]; Retroreflective Thermoplastic Yellow, Traffic Markings [309.68 m2]; Retroreflective raised pavement markers (cat eyes) [580 nr] |

| ID | Task | Start | Finish | Complete | Other |
| --- | --- | --- | --- | --- | --- |
| 897 | **RHD4-02-002-Z2-L102-Storm Network - ST** | 2026-08-17 → 2026-09-03 (+17d) | 2026-10-28 → 2027-05-23 (+207d) |  |  |
| 916 | **RHD4-02-002-L102-(ST)-MH Works - 2000 mm diameter** | 2026-08-17 → 2026-12-31 (+136d) | 2026-08-30 → 2027-01-13 (+136d) |  |  |
| RHD4CZ2L102ST3102 | Excavation and PC Blinding works for MH 2000 mm - (RD-L-10/2)-Z2-L102-ST | 2026-08-17 → 2026-12-31 (+136d) | 2026-08-18 → 2027-01-02 (+137d) |  |  |
| RHD4CZ2L102ST3202 | Installation of Base for MH 2000 mm - (RD-L-10/2)-Z2-L102-ST | 2026-08-19 → 2027-01-03 (+137d) | 2026-08-22 → 2027-01-05 (+136d) |  | resources Skilled labor [27.23 h]; Unskilled Labor [27.23 h]; Equipment Opreator [10.89 h]; Boom Truck [5.45 h]; Concrete Mixer Truck [5.45 h]; MH (2000mm Diameter) - ST - depth 2.51 - 3.5m [1 nr]; MH (2000mm Diameter) - ST - depth 3.51 -4.5m [0.25 nr] → Skilled labor [27.2 h]; Unskilled Labor [27.2 h]; Equipment Opreator [10.89 h]; Boom Truck [5.45 h]; Concrete Mixer Truck [5.45 h]; MH (2000mm Diameter) - ST - depth 2.51 - 3.5m [1 nr]; MH (2000mm Diameter) - ST - depth 3.51 -4.5m [0.25 nr] |
| RHD4CZ2L102ST3302 | MH Ring and C.Slab works and Backfilling works for MH 2000 mm - (RD-L-10/2)-Z2-L102-ST | 2026-08-23 → 2027-01-06 (+136d) | 2026-08-25 → 2027-01-09 (+137d) |  | resources Skilled labor [27.23 h]; Unskilled Labor [27.23 h]; Equipment Opreator [19.06 h]; Boom Truck [10.89 h]; Concrete Mixer Truck [8.17 h]; MH (2000mm Diameter) - ST - depth 2.51 - 3.5m [1.4 nr]; MH (2000mm Diameter) - ST - depth 3.51 -4.5m [0.35 nr] → Skilled labor [27.2 h]; Unskilled Labor [27.2 h]; Equipment Opreator [19.06 h]; Boom Truck [10.89 h]; Concrete Mixer Truck [8.17 h]; MH (2000mm Diameter) - ST - depth 2.51 - 3.5m [1.4 nr]; MH (2000mm Diameter) - ST - depth 3.51 -4.5m [0.35 nr] |
| RHD4CZ2L102ST3402 | Steel Cover for MH 2000 mm - (RD-L-10/2)-Z2-L102-ST | 2026-08-26 → 2027-01-10 (+137d) | 2026-08-27 → 2027-01-11 (+137d) |  |  |
| RHD4CZ2L102ST3502 | Finishing, Benching, Testing works for MH 2000 mm - (RD-L-10/2)-Z2-L102-ST | 2026-08-29 → 2027-01-12 (+136d) | 2026-08-30 → 2027-01-13 (+136d) |  | resources Skilled labor [19.93 h]; Unskilled Labor [39.97 h]; Plumber [19.93 h]; Equipment Opreator [4.03 h]; Water Truck [4.03 h]; MH (2000mm Diameter) - ST - depth 2.51 - 3.5m [0.4 nr]; MH (2000mm Diameter) - ST - depth 3.51 -4.5m [0.1 nr] → Skilled labor [19.93 h]; Unskilled Labor [40 h]; Plumber [19.93 h]; Equipment Opreator [4 h]; Water Truck [4 h]; MH (2000mm Diameter) - ST - depth 2.51 - 3.5m [0.4 nr]; MH (2000mm Diameter) - ST - depth 3.51 -4.5m [0.1 nr] |
| 915 | **RHD4-02-002-L102-(ST)-MH Works - 1500 mm diameter** | 2026-08-19 → 2027-01-03 (+137d) | 2026-10-26 → 2027-05-20 (+206d) |  |  |
| RHD4CZ2L102ST3101 | Excavation and PC Blinding works for MH 1500 mm - (RD-L-10/2)-Z2-L102-ST | 2026-08-19 → 2027-01-03 (+137d) | 2026-08-23 → 2027-01-06 (+136d) |  |  |
| RHD4CZ2L102ST3201 | Installation of Base for MH 1500 mm - (RD-L-10/2)-Z2-L102-ST | 2026-08-24 → 2027-01-07 (+136d) | 2026-08-27 → 2027-01-11 (+137d) |  |  |
| RHD4CZ2L102ST3301 | MH Ring and C.Slab works and Backfilling works for MH 1500 mm - (RD-L-10/2)-Z2-L102-ST | 2026-08-29 → 2027-01-12 (+136d) | 2026-09-01 → 2027-01-16 (+137d) |  |  |
| RHD4CZ2L102ST3401 | Steel Cover for MH 1500 mm - (RD-L-10/2)-Z2-L102-ST | 2026-10-05 → 2027-02-07 (+125d) | 2026-10-07 → 2027-02-09 (+125d) |  |  |
| RHD4CZ2L102ST3501 | Finishing, Benching, Testing works for MH 1500 mm - (RD-L-10/2)-Z2-L102-ST | 2026-10-22 → 2027-05-12 (+202d) | 2026-10-26 → 2027-05-20 (+206d) |  |  |
| 914 | **RHD4-02-002-L102-(ST)-MH Works - 1200 mm diameter** | 2026-08-24 → 2027-01-07 (+136d) | 2026-10-28 → 2027-05-23 (+207d) |  |  |
| RHD4CZ2L102ST3100 | Excavation and PC Blinding works for MH 1200 mm - (RD-L-10/2)-Z2-L102-ST | 2026-08-24 → 2027-01-07 (+136d) | 2026-08-25 → 2027-01-09 (+137d) |  |  |
| RHD4CZ2L102ST3200 | Installation of Base for MH 1200 mm - (RD-L-10/2)-Z2-L102-ST | 2026-08-29 → 2027-01-12 (+136d) | 2026-08-30 → 2027-01-13 (+136d) |  | resources Skilled labor [3.59 h]; Unskilled Labor [3.59 h]; Equipment Opreator [1.42 h]; Boom Truck [0.76 h]; Concrete Mixer Truck [0.76 h]; MH (1200mm Diameter) - ST - depth 1.50 - 2.5m [0.25 nr] → Skilled labor [3.59 h]; Unskilled Labor [3.59 h]; Equipment Opreator [1.42 h]; Boom Truck [0.8 h]; Concrete Mixer Truck [0.8 h]; MH (1200mm Diameter) - ST - depth 1.50 - 2.5m [0.25 nr] |
| RHD4CZ2L102ST3300 | MH Ring and C.Slab works and Backfilling works for MH 1200 mm - (RD-L-10/2)-Z2-L102-ST | 2026-09-02 → 2027-01-17 (+137d) | 2026-09-03 → 2027-01-18 (+137d) |  |  |
| RHD4CZ2L102ST3400 | Steel Cover for MH 1200 mm - (RD-L-10/2)-Z2-L102-ST | 2026-10-22 → 2027-05-12 (+202d) | 2026-10-24 → 2027-05-13 (+201d) |  | resources Skilled labor [3.59 h]; Unskilled Labor [7.3 h]; Equipment Opreator [0.76 h]; Boom Truck [0.76 h]; MH (1200mm Diameter) - ST - depth 1.50 - 2.5m [0.05 nr] → Skilled labor [3.59 h]; Unskilled Labor [7.3 h]; Equipment Opreator [0.8 h]; Boom Truck [0.8 h]; MH (1200mm Diameter) - ST - depth 1.50 - 2.5m [0.05 nr] |
| RHD4CZ2L102ST3500 | Finishing, Benching, Testing works for MH 1200 mm - (RD-L-10/2)-Z2-L102-ST | 2026-10-27 → 2027-05-22 (+207d) | 2026-10-28 → 2027-05-23 (+207d) |  | resources Skilled labor [3.59 h]; Unskilled Labor [7.3 h]; Plumber [3.59 h]; Equipment Opreator [0.76 h]; Water Truck [0.76 h]; MH (1200mm Diameter) - ST - depth 1.50 - 2.5m [0.1 nr] → Skilled labor [3.59 h]; Unskilled Labor [7.3 h]; Plumber [3.59 h]; Equipment Opreator [0.8 h]; Water Truck [0.8 h]; MH (1200mm Diameter) - ST - depth 1.50 - 2.5m [0.1 nr] |
| 904 | **RHD4-02-002-L102-(ST)-GRP Pipes - 1000 mm diameter** | 2026-08-23 → 2026-12-31 (+130d) | 2026-09-02 → 2027-01-11 (+131d) |  |  |
| RHD4CZ2L102ST1106 | Excavation works for GRP Pipe Line 1000 mm - (RD-L-10/2)-Z2-L102-ST | 2026-08-23 → 2026-12-31 (+130d) | 2026-08-24 → 2027-01-02 (+131d) |  | resources Skilled labor [20.26 h]; Unskilled Labor [20.26 h]; Equipment Opreator [24.29 h]; Excavator-Poclain [20.26 h]; Dump Truck [4.03 h]; GRP (1000mm Diameter) - ST - Depth: 1.51m - 2.5m [36.25 m]; GRP (1000mm Diameter) - ST - Depth: 2.51m - 3.5m [11.27 m]; GRP (1000mm Diameter) - ST - Depth: 3.51m - 4.5m [1.62 m] → Skilled labor [20.26 h]; Unskilled Labor [20.26 h]; Equipment Opreator [24.29 h]; Excavator-Poclain [20.26 h]; Dump Truck [4 h]; GRP (1000mm Diameter) - ST - Depth: 1.51m - 2.5m [36.25 m]; GRP (1000mm Diameter) - ST - Depth: 2.51m - 3.5m [11.27 m]; GRP (1000mm Diameter) - ST - Depth: 3.51m - 4.5m [1.62 m] |
| RHD4CZ2L102ST1206 | Bedding works for GRP Pipe Line 1000 mm - (RD-L-10/2)-Z2-L102-ST | 2026-08-25 → 2027-01-03 (+131d) | 2026-08-26 → 2027-01-04 (+131d) |  |  |
| RHD4CZ2L102ST1306 | Installing for GRP Pipe Line 1000 mm - (RD-L-10/2)-Z2-L102-ST | 2026-08-27 → 2027-01-05 (+131d) | 2026-08-29 → 2027-01-06 (+130d) |  |  |
| RHD4CZ2L102ST1406 | Primary Test for GRP Pipe Line 1000 mm - (RD-L-10/2)-Z2-L102-ST | 2026-08-30 → 2027-01-07 (+130d) | 2026-08-31 → 2027-01-09 (+131d) |  |  |
| RHD4CZ2L102ST1506 | Backfilling and warning tape works for GRP Pipe Line 1000 mm - (RD-L-10/2)-Z2-L102-ST | 2026-09-01 → 2027-01-10 (+131d) | 2026-09-02 → 2027-01-11 (+131d) |  |  |
| 903 | **RHD4-02-002-L102-(ST)-GRP Pipes - 900 mm diameter** |  | 2026-09-14 → 2027-01-20 (+128d) |  |  |
| RHD4CZ2L102ST1105 | Excavation works for GRP Pipe Line 900 mm - (RD-L-10/2)-Z2-L102-ST | 2026-09-03 A | 2026-09-05 → 2026-09-16 A (+11d) | 0% → 100% |  |
| RHD4CZ2L102ST1205 | Bedding works for GRP Pipe Line 900 mm - (RD-L-10/2)-Z2-L102-ST | 2026-09-06 → 2027-01-12 (+128d) | 2026-09-07 → 2027-01-13 (+128d) |  |  |
| RHD4CZ2L102ST1305 | Installing for GRP Pipe Line 900 mm - (RD-L-10/2)-Z2-L102-ST | 2026-09-08 → 2027-01-14 (+128d) | 2026-09-09 → 2027-01-16 (+129d) |  |  |
| RHD4CZ2L102ST1405 | Primary Test for GRP Pipe Line 900 mm - (RD-L-10/2)-Z2-L102-ST | 2026-09-10 → 2027-01-17 (+129d) | 2026-09-12 → 2027-01-18 (+128d) |  |  |
| RHD4CZ2L102ST1505 | Backfilling and warning tape works for GRP Pipe Line 900 mm - (RD-L-10/2)-Z2-L102-ST | 2026-09-13 → 2027-01-19 (+128d) | 2026-09-14 → 2027-01-20 (+128d) |  |  |
| 902 | **RHD4-02-002-L102-(ST)-GRP Pipes - 800 mm diameter** | 2026-09-15 → 2027-01-21 (+128d) | 2026-09-27 → 2027-02-01 (+127d) |  |  |
| RHD4CZ2L102ST1104 | Excavation works for GRP Pipe Line 800 mm - (RD-L-10/2)-Z2-L102-ST | 2026-09-15 → 2027-01-21 (+128d) | 2026-09-16 → 2027-01-23 (+129d) |  |  |
| RHD4CZ2L102ST1204 | Bedding works for GRP Pipe Line 800 mm - (RD-L-10/2)-Z2-L102-ST | 2026-09-17 → 2027-01-24 (+129d) | 2026-09-19 → 2027-01-25 (+128d) |  |  |
| RHD4CZ2L102ST1304 | Installing for GRP Pipe Line 800 mm - (RD-L-10/2)-Z2-L102-ST | 2026-09-20 → 2027-01-26 (+128d) | 2026-09-21 → 2027-01-27 (+128d) |  | resources Unskilled Labor [7.19 h]; Plumber [3.59 h]; GRP (800mm Diameter) - ST - Depth: 1.51m - 2.5m [37.44 m]; GRP (800mm Diameter) - ST - Depth: 2.51m - 3.5m → Unskilled Labor [7.2 h]; Plumber [3.59 h]; GRP (800mm Diameter) - ST - Depth: 1.51m - 2.5m [37.44 m]; GRP (800mm Diameter) - ST - Depth: 2.51m - 3.5m |
| RHD4CZ2L102ST1404 | Primary Test for GRP Pipe Line 800 mm - (RD-L-10/2)-Z2-L102-ST | 2026-09-22 → 2027-01-28 (+128d) | 2026-09-24 → 2027-01-30 (+128d) |  |  |
| RHD4CZ2L102ST1504 | Backfilling and warning tape works for GRP Pipe Line 800 mm - (RD-L-10/2)-Z2-L102-ST | 2026-09-26 → 2027-01-31 (+127d) | 2026-09-27 → 2027-02-01 (+127d) |  |  |
| 901 | **RHD4-02-002-L102-(ST)-GRP Pipes - 700 mm diameter** | 2026-09-17 → 2026-09-15 (-2d) | 2026-09-29 → 2027-02-03 (+127d) |  |  |
| RHD4CZ2L102ST1103 | Excavation works for GRP Pipe Line 700 mm - (RD-L-10/2)-Z2-L102-ST | 2026-09-17 → 2026-09-15 A (-2d) | 2026-09-19 A | 0% → 100% |  |
| RHD4CZ2L102ST1203 | Bedding works for GRP Pipe Line 700 mm - (RD-L-10/2)-Z2-L102-ST | 2026-09-20 → 2027-01-24 (+126d) | 2026-09-21 → 2027-01-25 (+126d) |  |  |
| RHD4CZ2L102ST1303 | Installing for GRP Pipe Line 700 mm - (RD-L-10/2)-Z2-L102-ST | 2026-09-22 → 2027-01-28 (+128d) | 2026-09-24 → 2027-01-30 (+128d) |  |  |
| RHD4CZ2L102ST1403 | Primary Test for GRP Pipe Line 700 mm - (RD-L-10/2)-Z2-L102-ST | 2026-09-26 → 2027-01-31 (+127d) | 2026-09-27 → 2027-02-01 (+127d) |  |  |
| RHD4CZ2L102ST1503 | Backfilling and warning tape works for GRP Pipe Line 700 mm - (RD-L-10/2)-Z2-L102-ST | 2026-09-28 → 2027-02-02 (+127d) | 2026-09-29 → 2027-02-03 (+127d) |  |  |
| 900 | **RHD4-02-002-L102-(ST)-GRP Pipes - 600 mm diameter** | 2026-09-20 → 2027-01-24 (+126d) | 2026-10-01 → 2027-02-06 (+128d) |  |  |
| RHD4CZ2L102ST1102 | Excavation works for GRP Pipe Line 600 mm - (RD-L-10/2)-Z2-L102-ST | 2026-09-20 → 2027-01-24 (+126d) | 2026-09-21 → 2027-01-25 (+126d) |  | resources Skilled labor [3.7 h]; Unskilled Labor [3.7 h]; Equipment Opreator [4.47 h]; Excavator-Poclain [3.7 h]; Dump Truck [0.76 h]; GRP (600mm Diameter) - ST - Depth less than 1.5 m [6.82 m]; GRP (600mm Diameter) - ST - Depth: 1.51m - 2.5m → Skilled labor [3.7 h]; Unskilled Labor [3.7 h]; Equipment Opreator [4.47 h]; Excavator-Poclain [3.7 h]; Dump Truck [0.8 h]; GRP (600mm Diameter) - ST - Depth less than 1.5 m [6.82 m]; GRP (600mm Diameter) - ST - Depth: 1.51m - 2.5m |
| RHD4CZ2L102ST1202 | Bedding works for GRP Pipe Line 600 mm - (RD-L-10/2)-Z2-L102-ST | 2026-09-22 → 2027-01-26 (+126d) | 2026-09-24 → 2027-01-27 (+125d) |  |  |
| RHD4CZ2L102ST1302 | Installing for GRP Pipe Line 600 mm - (RD-L-10/2)-Z2-L102-ST | 2026-09-26 → 2027-01-31 (+127d) | 2026-09-27 → 2027-02-01 (+127d) |  |  |
| RHD4CZ2L102ST1402 | Primary Test for GRP Pipe Line 600 mm - (RD-L-10/2)-Z2-L102-ST | 2026-09-28 → 2027-02-02 (+127d) | 2026-09-29 → 2027-02-03 (+127d) |  |  |
| RHD4CZ2L102ST1502 | Backfilling and warning tape works for GRP Pipe Line 600 mm - (RD-L-10/2)-Z2-L102-ST | 2026-09-30 → 2027-02-04 (+127d) | 2026-10-01 → 2027-02-06 (+128d) |  |  |
| 898 | **RHD4-02-002-L102-(ST)-GRP Pipes - 400 mm diameter** | 2026-09-22 → 2027-01-26 (+126d) | 2026-10-04 → 2027-02-06 (+125d) |  |  |
| RHD4CZ2L102ST1100 | Excavation works for GRP Pipe Line 400 mm - (RD-L-10/2)-Z2-L102-ST | 2026-09-22 → 2027-01-26 (+126d) | 2026-09-24 → 2027-01-27 (+125d) |  |  |
| RHD4CZ2L102ST1200 | Bedding works for GRP Pipe Line 400 mm - (RD-L-10/2)-Z2-L102-ST | 2026-09-26 → 2027-01-28 (+124d) | 2026-09-27 → 2027-01-30 (+125d) |  | resources Skilled labor [0.44 h]; Unskilled Labor [0.76 h]; Equipment Opreator [0.76 h]; Excavator-Poclain [0.44 h]; Dump Truck [0.44 h]; GRP (400mm Diameter) - ST - Depth less than 1.5 m [0.56 m] → Skilled labor [0.44 h]; Unskilled Labor [0.8 h]; Equipment Opreator [0.8 h]; Excavator-Poclain [0.44 h]; Dump Truck [0.44 h]; GRP (400mm Diameter) - ST - Depth less than 1.5 m [0.56 m] |
| RHD4CZ2L102ST1300 | Installing for GRP Pipe Line 400 mm - (RD-L-10/2)-Z2-L102-ST | 2026-09-28 → 2027-01-31 (+125d) | 2026-09-29 → 2027-02-01 (+125d) |  | resources Unskilled Labor [1.63 h]; Plumber [0.76 h]; GRP (400mm Diameter) - ST - Depth less than 1.5 m [5.03 m] → Unskilled Labor [1.6 h]; Plumber [0.8 h]; GRP (400mm Diameter) - ST - Depth less than 1.5 m [5.03 m] |
| RHD4CZ2L102ST1400 | Primary Test for GRP Pipe Line 400 mm - (RD-L-10/2)-Z2-L102-ST | 2026-09-30 → 2027-02-02 (+125d) | 2026-10-01 → 2027-02-03 (+125d) |  |  |
| RHD4CZ2L102ST1500 | Backfilling and warning tape works for GRP Pipe Line 400 mm - (RD-L-10/2)-Z2-L102-ST | 2026-10-03 → 2027-02-04 (+124d) | 2026-10-04 → 2027-02-06 (+125d) |  |  |
| 912 | **RHD4-02-002-L102-(ST)-UPVC Pipes - 300 mm diameter** | 2026-10-05 → 2027-02-07 (+125d) | 2026-10-21 → 2027-05-11 (+202d) |  |  |
| RHD4CZ2L102ST2100 | Excavation works for UPVC Pipe Line 300 mm - (RD-L-10/2)-Z2-L102-ST | 2026-10-05 → 2027-02-07 (+125d) | 2026-10-07 → 2027-02-09 (+125d) |  |  |
| RHD4CZ2L102ST2200 | Bedding works for UPVC Pipe Line 300 mm - (RD-L-10/2)-Z2-L102-ST | 2026-10-08 → 2027-04-28 (+202d) | 2026-10-11 → 2027-05-01 (+202d) |  | resources Skilled labor [24.83 h]; Unskilled Labor [49.66 h]; Equipment Opreator [49.66 h]; Excavator-Poclain [24.83 h]; Dump Truck [24.83 h]; UPVC (300mm Diameter) - ST - Depth less than 1.5 [30.4 m]; UPVC (300mm Diameter) - ST - Depth: 1.51m - 2.5m → Skilled labor [24.8 h]; Unskilled Labor [49.66 h]; Equipment Opreator [49.66 h]; Excavator-Poclain [24.8 h]; Dump Truck [24.8 h]; UPVC (300mm Diameter) - ST - Depth less than 1.5 [30.4 m]; UPVC (300mm Diameter) - ST - Depth: 1.51m - 2.5m |
| RHD4CZ2L102ST2300 | Installing for UPVC Pipe Line 300 mm - (RD-L-10/2)-Z2-L102-ST | 2026-10-12 → 2027-05-02 (+202d) | 2026-10-14 → 2027-05-04 (+202d) |  |  |
| RHD4CZ2L102ST2400 | Primary Test for UPVC Pipe Line 300 mm - (RD-L-10/2)-Z2-L102-ST | 2026-10-15 → 2027-05-05 (+202d) | 2026-10-17 → 2027-05-06 (+201d) |  |  |
| RHD4CZ2L102ST2500 | Backfilling and warning tape works for UPVC Pipe Line 300 mm - (RD-L-10/2)-Z2-L102-ST | 2026-10-18 → 2027-05-08 (+202d) | 2026-10-21 → 2027-05-11 (+202d) |  |  |
| 920 | **RHD4-02-002-L102-(ST)-Concrete Encasement** | 2026-10-13 → 2027-05-03 (+202d) | 2026-10-14 → 2027-05-04 (+202d) |  |  |
| RHD4CZ2L102ST6100 | Pipe Encasement for Storm Pipelines - (RD-L-10/2)-Z2-L102-ST | 2026-10-13 → 2027-05-03 (+202d) | 2026-10-14 → 2027-05-04 (+202d) |  |  |
| 921 | **RHD4-02-002-Z2-L102-Catch Basin - ST** | 2026-08-19 → 2026-10-27 (+69d) | 2026-09-15 → 2027-01-30 (+137d) |  |  |
| 922 | **RHD4-02-002-L102-(ST)-Single Catch Basin Works** | 2026-08-19 → 2026-10-27 (+69d) | 2026-09-12 → 2027-01-21 (+131d) |  |  |
| RHD4CZ2L102ST7100 | Excavation works for Single Catch Basin - (RD-L-10/2)-Z2-L102-ST | 2026-08-19 → 2026-10-27 A (+69d) | 2026-08-22 → 2027-01-04 (+135d) | 0% → 65% |  |
| RHD4CZ2L102ST7200 | PC Blinding, Installation and Pipe connection for Single Catch Basin - (RD-L-10/2)-Z2-L102-ST | 2026-08-23 → 2027-01-04 (+134d) | 2026-08-25 → 2027-01-06 (+134d) |  |  |
| RHD4CZ2L102ST7300 | Rings & C.Slab & Final Backfill for Single Catch Basin - (RD-L-10/2)-Z2-L102-ST | 2026-08-29 → 2027-01-07 (+131d) | 2026-09-01 → 2027-01-11 (+132d) |  |  |
| RHD4CZ2L102ST7400 | Steel Cover for Single Catch Basin - (RD-L-10/2)-Z2-L102-ST | 2026-09-02 → 2027-01-12 (+132d) | 2026-09-05 → 2027-01-14 (+131d) |  |  |
| RHD4CZ2L102ST7500 | Finishing and Insulation works for Single Catch Basin - (RD-L-10/2)-Z2-L102-ST | 2026-09-06 → 2027-01-16 (+132d) | 2026-09-12 → 2027-01-21 (+131d) |  |  |

| ID | Task | Start | Finish | Complete | Other |
| --- | --- | --- | --- | --- | --- |
| 923 | **RHD4-02-002-L102-(ST)-Double Catch Basin Works** | 2026-09-05 → 2027-01-19 (+136d) | 2026-09-15 → 2027-01-30 (+137d) |  |  |
| RHD4CZ2L102ST8100 | Excavation works for Double Catch Basin - (RD-L-10/2)-Z2-L102-ST | 2026-09-05 → 2027-01-19 (+136d) | 2026-09-06 → 2027-01-20 (+136d) |  |  |
| RHD4CZ2L102ST8200 | PC Blinding, Installation and Pipe connection for Double Catch Basin - (RD-L-10/2)-Z2-L102-ST | 2026-09-07 → 2027-01-21 (+136d) | 2026-09-08 → 2027-01-23 (+137d) |  |  |
| RHD4CZ2L102ST8300 | Rings & C.Slab & Final Backfillfor Double Catch Basin - (RD-L-10/2)-Z2-L102-ST | 2026-09-09 → 2027-01-24 (+137d) | 2026-09-10 → 2027-01-25 (+137d) |  |  |
| RHD4CZ2L102ST8400 | Steel Cover for Double Catch Basin - (RD-L-10/2)-Z2-L102-ST | 2026-09-12 → 2027-01-26 (+136d) | 2026-09-13 → 2027-01-27 (+136d) |  |  |
| RHD4CZ2L102ST8500 | Finishing and Insulation works for Double Catch Basin - (RD-L-10/2)-Z2-L102-ST | 2026-09-14 → 2027-01-28 (+136d) | 2026-09-15 → 2027-01-30 (+137d) |  |  |
| 894 | **RHD4-02-002-Z2-L102-Concrete Box Culvert - ST** | 2027-01-07 → 2026-08-04 (-156d) | 2027-02-10 → 2027-08-30 (+201d) |  |  |
| 895 | **RHD4-02-002-L102-(ST)-Concrete Box Culvert** | 2027-01-07 → 2026-08-04 (-156d) | 2027-02-10 → 2027-08-30 (+201d) |  |  |
| RHD4CZ2L102ST4100 | Excavation works for Box Culvert - (RD-L-10/2)-Z2-L102-ST | 2027-01-07 → 2026-08-04 A (-156d) | 2027-01-11 → 2027-07-31 (+201d) | 0% → 30% |  |
| RHD4CZ2L102ST4200 | PC works for Box Culvert - (RD-L-10/2)-Z2-L102-ST | 2027-01-12 → 2026-08-06 A (-159d) | 2027-01-13 → 2027-08-02 (+201d) | 0% → 47% | resources Skilled labor [7.95 h]; Unskilled Labor [7.95 h]; Equipment Opreator [7.95 h]; Concrete Mixer Truck [4.03 h]; Concrete Pump [4.03 h]; 100 mm thickness lean concrete under the base - ST [1205.96 m2] → Skilled labor [7.95 h]; Unskilled Labor [7.95 h]; Equipment Opreator [7.95 h]; Concrete Mixer Truck [4 h]; Concrete Pump [4 h]; 100 mm thickness lean concrete under the base - ST [1205.96 m2] |
| RHD4CZ2L102ST4400 | Raft works for Box Culvert - (RD-L-10/2)-Z2-L102-ST | 2027-01-14 → 2026-08-09 A (-158d) | 2027-01-21 → 2027-08-10 (+201d) | 0% → 38% | resources Carpenter [59.35 h]; Skilled labor [71.99 h]; Steel Fixer [12.63 h]; Equipment Opreator [121.32 h]; Boom Truck [2.5 h]; Concrete Mixer Truck [59.35 h]; Concrete Pump [59.35 h]; Supply and cast in place reinforced concrete for Box culverts - ST [436.27 m3]; Supply, placing, and fixing of high tensile reinforcement steel for Box culverts - ST [92.49 Ton] → Carpenter [59.35 h]; Skilled labor [72 h]; Steel Fixer [12.63 h]; Equipment Opreator [121.32 h]; Boom Truck [2.5 h]; Concrete Mixer Truck [59.35 h]; Concrete Pump [59.35 h]; Supply and cast in place reinforced concrete for Box culverts - ST [436.27 m3]; Supply, placing, and fixing of high tensile reinforcement steel for Box culverts - ST [92.49 Ton] |
| RHD4CZ2L102ST4500 | Wall and slab works for Box Culvert - (RD-L-10/2)-Z2-L102-ST | 2027-01-23 → 2026-08-11 A (-165d) | 2027-01-30 → 2027-08-18 (+200d) | 0% → 54% | resources Carpenter [59.35 h]; Skilled labor [71.99 h]; Steel Fixer [12.63 h]; Equipment Opreator [121.32 h]; Boom Truck [2.5 h]; Concrete Mixer Truck [59.35 h]; Concrete Pump [59.35 h]; Supply and cast in place reinforced concrete for Box culverts - ST [545.34 m3]; Supply, placing, and fixing of high tensile reinforcement steel for Box culverts - ST [138.73 Ton] → Carpenter [59.35 h]; Skilled labor [72 h]; Steel Fixer [12.63 h]; Equipment Opreator [121.32 h]; Boom Truck [2.5 h]; Concrete Mixer Truck [59.35 h]; Concrete Pump [59.35 h]; Supply and cast in place reinforced concrete for Box culverts - ST [545.34 m3]; Supply, placing, and fixing of high tensile reinforcement steel for Box culverts - ST [138.73 Ton] |
| RHD4CZ2L102ST4700 | Backfilling works for Box Culvert - (RD-L-10/2)-Z2-L102-ST | 2027-01-31 → 2027-08-19 (+200d) | 2027-02-03 → 2027-08-23 (+201d) |  |  |
| RHD4CZ2L102ST4600 | Insulation and Testing for Box Culvert - (RD-L-10/2)-Z2-L102-ST | 2027-02-04 → 2027-08-24 (+201d) | 2027-02-10 → 2027-08-30 (+201d) |  |  |
| 896 | **RHD4-02-002-L102-(ST)-Concrete Chambers** | 2027-01-12 → 2027-08-01 (+201d) | 2027-01-20 → 2027-08-09 (+201d) |  |  |
| RHD4CZ2L102ST5100 | Excavation and Bedding for Concrete Chambers - for Box Culvert - (RD-L-10/2)-Z2-L102-ST | 2027-01-12 → 2027-08-01 (+201d) | 2027-01-13 → 2027-08-02 (+201d) |  |  |
| RHD4CZ2L102ST5200 | PC works for Concrete Chambers - for Box Culvert - (RD-L-10/2)-Z2-L102-ST | 2027-01-14 → 2027-08-03 (+201d) | 2027-01-16 → 2027-08-04 (+200d) |  |  |
| RHD4CZ2L102ST5300 | Installation for Concrete Chambers - for Box Culvert - (RD-L-10/2)-Z2-L102-ST | 2027-01-17 → 2027-08-05 (+200d) | 2027-01-18 → 2027-08-07 (+201d) |  |  |
| RHD4CZ2L102ST5400 | Backfilling works for Concrete Chambers - for Box Culvert - (RD-L-10/2)-Z2-L102-ST | 2027-01-19 → 2027-08-08 (+201d) | 2027-01-20 → 2027-08-09 (+201d) |  |  |
| 946 | **RHD4-02-002-Z2-L102-Sewage Network - SW** | 2026-10-22 → 2026-10-20 (-2d) | 2026-12-05 → 2027-06-26 (+203d) |  |  |
| 956 | **RHD4-02-002-L102-(SW)-MH Works - 1200 mm diameter** | 2026-10-22 → 2026-10-20 (-2d) | 2026-12-02 → 2027-06-26 (+206d) |  |  |
| RHD4CZ2L102SW3100 | Excavation and PC Blinding works for MH 1200 mm - (RD-L-10/2)-Z2-L102-SW | 2026-10-22 → 2026-10-20 A (-2d) | 2026-10-29 → 2027-05-19 (+202d) | 0% → 42% | resources Skilled labor [74.38 h]; Unskilled Labor [74.38 h]; Equipment Opreator [119.03 h]; Excavator-Poclain [74.38 h]; Water Truck [7.41 h]; Dump Truck [37.24 h]; MH (1200mm Diameter) - SW - depth 0 - 1.5m [1 nr]; MH (1200mm Diameter) - SW - depth 1.51 - 2.5m [2.5 nr]; MH (1200mm Diameter) - SW - depth 2.51 - 3.5m [0.25 nr] → Skilled labor [74.4 h]; Unskilled Labor [74.4 h]; Equipment Opreator [119.03 h]; Excavator-Poclain [74.4 h]; Water Truck [7.41 h]; Dump Truck [37.24 h]; MH (1200mm Diameter) - SW - depth 0 - 1.5m [1 nr]; MH (1200mm Diameter) - SW - depth 1.51 - 2.5m [2.5 nr]; MH (1200mm Diameter) - SW - depth 2.51 - 3.5m [0.25 nr] |
| RHD4CZ2L102SW3200 | Installation of Base for MH 1200 mm - (RD-L-10/2)-Z2-L102-SW | 2026-10-31 → 2027-05-24 (+205d) | 2026-11-08 → 2027-06-01 (+205d) |  |  |
| RHD4CZ2L102SW3300 | MH Ring and C.Slab works and Backfilling works for MH 1200 mm - (RD-L-10/2)-Z2-L102-SW | 2026-11-09 → 2027-06-02 (+205d) | 2026-11-17 → 2027-06-10 (+205d) |  |  |
| RHD4CZ2L102SW3400 | Steel Cover for MH 1200 mm - (RD-L-10/2)-Z2-L102-SW | 2026-11-18 → 2027-06-12 (+206d) | 2026-11-23 → 2027-06-16 (+205d) |  |  |
| RHD4CZ2L102SW3500 | Finishing, Benching, Testing works for MH 1200 mm - (RD-L-10/2)-Z2-L102-SW | 2026-11-24 → 2027-06-17 (+205d) | 2026-12-02 → 2027-06-26 (+206d) |  |  |
| 952 | **RHD4-02-002-L102-(SW)-UPVC Pipes - 200 mm diameter** | 2026-10-31 → 2026-10-27 (-4d) | 2026-12-05 → 2027-06-23 (+200d) |  |  |
| RHD4CZ2L102SW2100 | Excavation works for UPVC Pipe Line 200 mm - (RD-L-10/2)-Z2-L102-SW | 2026-10-31 → 2026-10-27 A (-4d) | 2026-11-04 → 2027-05-22 (+199d) | 0% → 58% |  |
| RHD4CZ2L102SW2200 | Bedding works for UPVC Pipe Line 200 mm - (RD-L-10/2)-Z2-L102-SW | 2026-11-05 → 2026-10-29 A (-7d) | 2026-11-10 → 2027-05-24 (+195d) | 0% → 54% |  |
| RHD4CZ2L102SW2300 | Installing for UPVC Pipe Line 200 mm - (RD-L-10/2)-Z2-L102-SW | 2026-11-18 → 2026-10-31 A (-18d) | 2026-11-24 → 2027-06-13 (+201d) | 0% → 55% |  |
| RHD4CZ2L102SW2400 | Primary Test for UPVC Pipe Line 200 mm - (RD-L-10/2)-Z2-L102-SW | 2026-11-25 → 2027-06-14 (+201d) | 2026-11-28 → 2027-06-16 (+200d) |  |  |
| RHD4CZ2L102SW2500 | Backfilling and warning tape works for UPVC Pipe Line 200 mm - (RD-L-10/2)-Z2-L102-SW | 2026-11-29 → 2027-06-17 (+200d) | 2026-12-05 → 2027-06-23 (+200d) |  |  |
| 983 | **RHD4-02-002-Z2-L102-Potable Network - PT** | 2026-12-06 → 2027-06-24 (+200d) | 2027-02-07 → 2027-08-26 (+200d) |  |  |
| 985 | **RHD4-02-002-L102-(PT)-HDPE Pipes - 160 mm diameter** | 2026-12-06 → 2027-06-24 (+200d) | 2027-01-06 → 2027-07-26 (+201d) |  |  |
| RHD4CZ2L102PT1101 | Excavation works for HDPE Pipline 160 mm - (RD-L-10/2)-Z2-L102-PT | 2026-12-06 → 2027-06-24 (+200d) | 2026-12-10 → 2027-06-29 (+201d) |  |  |
| RHD4CZ2L102PT1201 | Bedding works for HDPE Pipline 160 mm - (RD-L-10/2)-Z2-L102-PT | 2026-12-12 → 2027-06-30 (+200d) | 2026-12-15 → 2027-07-04 (+201d) |  |  |
| RHD4CZ2L102PT1301 | Installing for HDPE Pipline 160 mm - (RD-L-10/2)-Z2-L102-PT | 2026-12-16 → 2027-07-05 (+201d) | 2026-12-23 → 2027-07-12 (+201d) |  |  |
| RHD4CZ2L102PT1401 | Primary Test for HDPE Pipline 160 mm - (RD-L-10/2)-Z2-L102-PT | 2026-12-28 → 2027-07-17 (+201d) | 2026-12-30 → 2027-07-19 (+201d) |  | resources Unskilled Labor [22.43 h]; Plumber [22.43 h]; Equipment Opreator [22.43 h]; Water Truck [22.43 h]; HDPE (160mm Diameter) - PT - Depth: less than 1.5m [206 m] → Unskilled Labor [22.4 h]; Plumber [22.4 h]; Equipment Opreator [22.4 h]; Water Truck [22.4 h]; HDPE (160mm Diameter) - PT - Depth: less than 1.5m [206 m] |
| RHD4CZ2L102PT1501 | Backfilling and warning tape works for HDPE Pipline 160 mm - (RD-L-10/2)-Z2-L102-PT | 2026-12-31 → 2027-07-20 (+201d) | 2027-01-06 → 2027-07-26 (+201d) |  |  |
| 984 | **RHD4-02-002-L102-(PT)-HDPE Pipes - 110 mm diameter** | 2026-12-12 → 2027-06-30 (+200d) | 2027-01-09 → 2027-07-28 (+200d) |  |  |
| RHD4CZ2L102PT1100 | Excavation works for HDPE Pipline 110 mm - (RD-L-10/2)-Z2-L102-PT | 2026-12-12 → 2027-06-30 (+200d) | 2026-12-13 → 2027-07-01 (+200d) |  |  |
| RHD4CZ2L102PT1200 | Bedding works for HDPE Pipline 110 mm - (RD-L-10/2)-Z2-L102-PT | 2026-12-16 → 2027-07-05 (+201d) | 2026-12-17 → 2027-07-06 (+201d) |  |  |
| RHD4CZ2L102PT1300 | Installing for HDPE Pipline 110 mm - (RD-L-10/2)-Z2-L102-PT | 2026-12-24 → 2027-07-13 (+201d) | 2026-12-26 → 2027-07-14 (+200d) |  |  |
| RHD4CZ2L102PT1400 | Primary Test for HDPE Pipline 110 mm - (RD-L-10/2)-Z2-L102-PT | 2026-12-31 → 2027-07-20 (+201d) | 2027-01-02 → 2027-07-21 (+200d) |  |  |
| RHD4CZ2L102PT1500 | Backfilling and warning tape works for HDPE Pipline 110 mm - (RD-L-10/2)-Z2-L102-PT | 2027-01-07 → 2027-07-27 (+201d) | 2027-01-09 → 2027-07-28 (+200d) |  |  |
| 989 | **RHD4-02-002-L102-(PT)-Gate Valves (Direct Buried)** | 2026-12-24 → 2027-07-13 (+201d) | 2027-01-12 → 2027-08-01 (+201d) |  |  |
| RHD4CZ2L102PT3100 | Installation for Direct Buried Gate Valves - (RD-L-10/2)-Z2-L102-PT | 2026-12-24 → 2027-07-13 (+201d) | 2026-12-27 → 2027-07-15 (+200d) |  |  |
| RHD4CZ2L102PT3200 | Stem and Service box for Direct Buried Gate Valves - (RD-L-10/2)-Z2-L102-PT | 2027-01-10 → 2027-07-29 (+200d) | 2027-01-12 → 2027-08-01 (+201d) |  |  |
| 992 | **RHD4-02-002-L102-(PT)-Wash out Valve Chambers** | 2027-01-07 → 2027-07-27 (+201d) | 2027-01-16 → 2027-08-04 (+200d) |  |  |
| RHD4CZ2L102PT2101 | Excavation and Bedding for Wash out Valve Chambers for Potable Water Network - (RD-L-10/2)-Z2-L102-PT | 2027-01-07 → 2027-07-27 (+201d) | 2027-01-09 → 2027-07-28 (+200d) |  |  |
| RHD4CZ2L102PT2201 | PC works for Wash out Valve Chambers for Potable Water Network - (RD-L-10/2)-Z2-L102-PT | 2027-01-10 → 2027-07-29 (+200d) | 2027-01-11 → 2027-07-31 (+201d) |  |  |
| RHD4CZ2L102PT2301 | Installation for Wash out Valve Chambers for Potable Water Network - (RD-L-10/2)-Z2-L102-PT | 2027-01-12 → 2027-08-01 (+201d) | 2027-01-13 → 2027-08-02 (+201d) |  |  |
| RHD4CZ2L102PT2401 | Backfilling works for Wash out Valve Chambers for Potable Water Network - (RD-L-10/2)-Z2-L102-PT | 2027-01-14 → 2027-08-03 (+201d) | 2027-01-16 → 2027-08-04 (+200d) |  |  |
| 993 | **RHD4-02-002-L102-(PT)-Wash out Valves** | 2027-01-12 → 2027-08-01 (+201d) | 2027-01-18 → 2027-08-07 (+201d) |  |  |
| RHD4CZ2L102PT3102 | Installation for Wash out Valves for Potable Water Network - (RD-L-10/2)-Z2-L102-PT | 2027-01-12 → 2027-08-01 (+201d) | 2027-01-13 → 2027-08-02 (+201d) |  |  |
| RHD4CZ2L102PT3202 | Stem and Service box for Wash out Valves for Potable Water Network - (RD-L-10/2)-Z2-L102-PT | 2027-01-17 → 2027-08-05 (+200d) | 2027-01-18 → 2027-08-07 (+201d) |  |  |
| 994 | **RHD4-02-002-L102-(PT)-Air Valve Chambers** | 2027-01-10 → 2027-07-29 (+200d) | 2027-01-18 → 2027-08-07 (+201d) |  |  |
| RHD4CZ2L102PT2102 | Excavation and Bedding for Air Valve Chambers for Potable Water Network - (RD-L-10/2)-Z2-L102-PT | 2027-01-10 → 2027-07-29 (+200d) | 2027-01-11 → 2027-07-31 (+201d) |  |  |
| RHD4CZ2L102PT2202 | PC works for Air Valve Chambers for Potable Water Network - (RD-L-10/2)-Z2-L102-PT | 2027-01-12 → 2027-08-01 (+201d) | 2027-01-13 → 2027-08-02 (+201d) |  |  |
| RHD4CZ2L102PT2302 | Installation for Air Valve Chambers for Potable Water Network - (RD-L-10/2)-Z2-L102-PT | 2027-01-14 → 2027-08-03 (+201d) | 2027-01-16 → 2027-08-04 (+200d) |  |  |
| RHD4CZ2L102PT2402 | Backfilling works for Air Valve Chambers for Potable Water Network - (RD-L-10/2)-Z2-L102-PT | 2027-01-17 → 2027-08-05 (+200d) | 2027-01-18 → 2027-08-07 (+201d) |  |  |
| 995 | **RHD4-02-002-L102-(PT)-Air Valves** | 2027-01-17 → 2027-08-05 (+200d) | 2027-01-20 → 2027-08-09 (+201d) |  |  |
| RHD4CZ2L102PT3103 | Installation for Air Valves for Potable Water Network - (RD-L-10/2)-Z2-L102-PT | 2027-01-17 → 2027-08-05 (+200d) | 2027-01-18 → 2027-08-07 (+201d) |  |  |
| RHD4CZ2L102PT3203 | Stem and Service box for Air Valves for Potable Water Network - (RD-L-10/2)-Z2-L102-PT | 2027-01-19 → 2027-08-08 (+201d) | 2027-01-20 → 2027-08-09 (+201d) |  |  |
| 996 | **RHD4-02-002-L102-(PT)-Fire Hydrant** | 2027-01-10 → 2027-07-29 (+200d) | 2027-02-07 → 2027-08-26 (+200d) |  |  |
| RHD4CZ2L102PT4100 | Excavation and Bedding and Pipe Installation for Fire Hydrant - (RD-L-10/2)-Z2-L102-PT | 2027-01-10 → 2027-07-29 (+200d) | 2027-01-17 → 2027-08-05 (+200d) |  |  |
| RHD4CZ2L102PT4200 | Valve Installation for Fire Hydrant - (RD-L-10/2)-Z2-L102-PT | 2027-01-18 → 2027-08-07 (+201d) | 2027-01-23 → 2027-08-11 (+200d) |  |  |
| RHD4CZ2L102PT4300 | Stem for Fire Hydrant - (RD-L-10/2)-Z2-L102-PT | 2027-01-24 → 2027-08-12 (+200d) | 2027-01-28 → 2027-08-17 (+201d) |  |  |
| RHD4CZ2L102PT4400 | Fire Installation for Fire Hydrant - (RD-L-10/2)-Z2-L102-PT | 2027-01-30 → 2027-08-18 (+200d) | 2027-02-03 → 2027-08-23 (+201d) |  |  |
| RHD4CZ2L102PT4500 | Protection Barriers for Fire Hydrant - (RD-L-10/2)-Z2-L102-PT | 2027-02-04 → 2027-08-24 (+201d) | 2027-02-07 → 2027-08-26 (+200d) |  |  |

| ID | Task | Start | Finish | Duration | Other |
| --- | --- | --- | --- | --- | --- |
| 998 | **RHD4-02-002-Z2-L102-Irrigation Network - IRR** | 2026-12-31 → 2027-07-20 (+201d) | 2027-02-11 → 2027-09-02 (+203d) |  |  |
| 1003 | **RHD4-02-002-L102-(IRR)-HDPE Pipes - 315 mm diameter** | 2026-12-31 → 2027-07-20 (+201d) | 2027-02-02 → 2027-08-29 (+208d) |  |  |
| RHD4CZ2L102IRR1104 | Excavation works for HDPE Pipline 315 mm - (RD-L-10/2)-Z2-L102-IRR | 2026-12-31 → 2027-07-20 (+201d) | 2027-01-07 → 2027-07-27 (+201d) |  |  |
| RHD4CZ2L102IRR1204 | Bedding works for HDPE Pipline 315 mm - (RD-L-10/2)-Z2-L102-IRR | 2027-01-09 → 2027-07-28 (+200d) | 2027-01-14 → 2027-08-03 (+201d) |  | resources Skilled labor [55.65 h]; Unskilled Labor [111.19 h]; Equipment Opreator [111.19 h]; Excavator-Poclain [55.65 h]; Dump Truck [55.65 h]; HDPE (315mm Diameter) - TSE - Depth: less than 1.5m [51.07 m] → Skilled labor [55.65 h]; Unskilled Labor [111.2 h]; Equipment Opreator [111.2 h]; Excavator-Poclain [55.65 h]; Dump Truck [55.65 h]; HDPE (315mm Diameter) - TSE - Depth: less than 1.5m [51.07 m] |
| RHD4CZ2L102IRR1304 | Installing for HDPE Pipline 315 mm - (RD-L-10/2)-Z2-L102-IRR | 2027-01-16 → 2027-08-04 (+200d) | 2027-01-23 → 2027-08-11 (+200d) |  |  |
| RHD4CZ2L102IRR1404 | Primary Test for HDPE Pipline 315 mm - (RD-L-10/2)-Z2-L102-IRR | 2027-01-24 → 2027-08-19 (+207d) | 2027-01-26 → 2027-08-22 (+208d) |  |  |
| RHD4CZ2L102IRR1504 | Backfilling and warning tape works for HDPE Pipline 315 mm - (RD-L-10/2)-Z2-L102-IRR | 2027-01-27 → 2027-08-23 (+208d) | 2027-02-02 → 2027-08-29 (+208d) |  | resources Skilled labor [55.65 h]; Unskilled Labor [111.19 h]; Equipment Opreator [111.19 h]; Excavator-Poclain [55.65 h]; Dump Truck [55.65 h]; HDPE (315mm Diameter) - TSE - Depth: less than 1.5m [204.27 m] → Skilled labor [55.65 h]; Unskilled Labor [111.2 h]; Equipment Opreator [111.2 h]; Excavator-Poclain [55.65 h]; Dump Truck [55.65 h]; HDPE (315mm Diameter) - TSE - Depth: less than 1.5m [204.27 m] |
| 6863 | **RHD4-02-002-L102-(IRR)-HDPE Pipes - 160 mm diameter** | 2026-12-31 → 2027-07-20 (+201d) | 2027-01-11 → 2027-07-31 (+201d) |  |  |
| RHD4CZ2L102IRR1100 | Excavation works for HDPE Pipline 160 mm - (RD-L-10/2)-Z2-L102-IRR | 2026-12-31 → 2027-07-20 (+201d) | 2027-01-02 → 2027-07-21 (+200d) |  |  |
| RHD4CZ2L102IRR1200 | Bedding works for HDPE Pipline 160 mm - (RD-L-10/2)-Z2-L102-IRR | 2027-01-03 → 2027-07-22 (+200d) | 2027-01-04 → 2027-07-24 (+201d) |  |  |
| RHD4CZ2L102IRR1300 | Installing for HDPE Pipline 160 mm - (RD-L-10/2)-Z2-L102-IRR | 2027-01-05 → 2027-07-25 (+201d) | 2027-01-06 → 2027-07-26 (+201d) |  |  |
| RHD4CZ2L102IRR1400 | Primary Test for HDPE Pipline 160 mm - (RD-L-10/2)-Z2-L102-IRR | 2027-01-07 → 2027-07-27 (+201d) | 2027-01-09 → 2027-07-28 (+200d) |  |  |
| RHD4CZ2L102IRR1500 | Backfilling and warning tape works for HDPE Pipline 160 mm - (RD-L-10/2)-Z2-L102-IRR | 2027-01-10 → 2027-07-29 (+200d) | 2027-01-11 → 2027-07-31 (+201d) |  |  |
| 1007 | **RHD4-02-002-L102-(IRR)-Gate Valves (Direct Buried)** | 2027-01-19 → 2027-08-15 (+208d) | 2027-02-11 → 2027-09-02 (+203d) |  |  |
| RHD4CZ2L102IRR3100 | Installation for Direct Buried Gate Valves - (RD-L-10/2)-Z2-L102-IRR | 2027-01-19 → 2027-08-15 (+208d) | 2027-01-23 → 2027-08-18 (+207d) |  |  |
| RHD4CZ2L102IRR3200 | Stem and Service box for Direct Buried Gate Valves - (RD-L-10/2)-Z2-L102-IRR | 2027-02-03 → 2027-08-30 (+208d) | 2027-02-11 → 2027-09-02 (+203d) | 8d → 4d |  |
| 1032 | **RHD4-02-002-Z2-L102-Medium Voltage Network - MV** | 2026-12-12 → 2027-06-30 (+200d) | 2027-02-09 → 2027-09-14 (+217d) |  |  |
| 1033 | **RHD4-02-002-L102-(MV)-Medium Voltage cable trench** | 2026-12-12 → 2027-06-30 (+200d) | 2027-02-01 → 2027-09-01 (+212d) |  |  |
| RHD4CZ2L102MV1100 | Excavation for Medium Voltage Trench - (RD-L-10/2)-Z2-L102-MV | 2026-12-12 → 2027-06-30 (+200d) | 2027-01-04 → 2027-07-24 (+201d) |  |  |
| RHD4CZ2L102MV1200 | Trench Backfilling for Medium Voltage Network - (RD-L-10/2)-Z2-L102-MV | 2027-01-20 → 2027-08-09 (+201d) | 2027-02-01 → 2027-09-01 (+212d) | 11d → 21d |  |
| 1035 | **RHD4-02-002-L102-(MV)-Medium Voltage cables 3Cx 500 mm²** | 2027-01-05 → 2027-07-25 (+201d) | 2027-02-09 → 2027-09-14 (+217d) |  |  |
| RHD4CZ2L102MV3100 | Installation of Medium Voltage Cables 3Cx 500 mm² - (RD-L-10/2)-Z2-L102-MV | 2027-01-05 → 2027-07-25 (+201d) | 2027-01-14 → 2027-08-03 (+201d) |  |  |
| RHD4CZ2L102MV3200 | Joints Installation of Medium Voltage Cables 3Cx 500 mm² - (RD-L-10/2)-Z2-L102-MV | 2027-01-16 → 2027-08-04 (+200d) | 2027-01-19 → 2027-08-08 (+201d) |  |  |
| RHD4CZ2L102MV3300 | Testing of Medium Voltage Cables 3Cx 500 mm² - (RD-L-10/2)-Z2-L102-MV | 2027-02-02 → 2027-09-02 (+212d) | 2027-02-07 → 2027-09-12 (+217d) | 5d → 9d |  |
| RHD4CZ2L102MV3400 | Termination of Medium Voltage Cables 3Cx 500 mm² - (RD-L-10/2)-Z2-L102-MV | 2027-02-08 → 2027-09-13 (+217d) | 2027-02-09 → 2027-09-14 (+217d) |  |  |
| 1036 | **RHD4-02-002-L102-(MV)-Medium Voltage cables 3Cx 50 mm²** | 2027-02-02 → 2027-09-02 (+212d) | 2027-02-03 → 2027-09-04 (+213d) |  |  |
| RHD4CZ2L102MV3401 | Termination of Medium Voltage Cables 3Cx 50 mm² - (RD-L-10/2)-Z2-L102-MV | 2027-02-02 → 2027-09-02 (+212d) | 2027-02-03 → 2027-09-04 (+213d) |  |  |
| 1037 | **RHD4-02-002-L102-(MV)-Normally open Point (Outdoor Type)** | 2027-01-13 → 2027-08-02 (+201d) | 2027-01-17 → 2027-08-05 (+200d) |  |  |
| RHD4CZ2L102MV4100 | Installation for Normally open Point - (RD-L-10/2)-Z2-L102-MV | 2027-01-13 → 2027-08-02 (+201d) | 2027-01-14 → 2027-08-03 (+201d) |  |  |
| RHD4CZ2L102MV4200 | Termination for Normally open Point - (RD-L-10/2)-Z2-L102-MV | 2027-01-16 → 2027-08-04 (+200d) | 2027-01-17 → 2027-08-05 (+200d) |  |  |
| 5390 | **RHD4-02-002-Z2-L102-Low Voltage Network - LV** | 2027-01-09 → 2027-07-28 (+200d) | 2027-01-26 → 2027-08-15 (+201d) |  |  |
| 5393 | **RHD4-02-002-L102-(LV)-Low Voltage cables** | 2027-01-09 → 2027-07-28 (+200d) | 2027-01-26 → 2027-08-15 (+201d) |  |  |
| RHD4CZ2L102LV3100 | Excavation for Low Voltage Cables for Low Voltage Network - (RD-L-10/2)-Z2-L102-LV | 2027-01-09 → 2027-07-28 (+200d) | 2027-01-13 → 2027-08-02 (+201d) |  |  |
| RHD4CZ2L102LV3200 | Cable Laying of Low Voltage Cables for Low Voltage Network - (RD-L-10/2)-Z2-L102-LV | 2027-01-14 → 2027-08-03 (+201d) | 2027-01-18 → 2027-08-07 (+201d) |  |  |
| RHD4CZ2L102LV3300 | Warning tape and Backfill for Low Voltage Cables for Low Voltage Network - (RD-L-10/2)-Z2-L102-LV | 2027-01-19 → 2027-08-08 (+201d) | 2027-01-23 → 2027-08-11 (+200d) |  |  |
| RHD4CZ2L102LV3400 | Testing of Low Voltage Cables for Low Voltage Network - (RD-L-10/2)-Z2-L102 | 2027-01-24 → 2027-08-12 (+200d) | 2027-01-26 → 2027-08-15 (+201d) |  |  |
| 1045 | **RHD4-02-002-Z2-L102-Street Lighting Network - SL** | 2027-01-21 → 2027-08-10 (+201d) | 2027-04-24 → 2027-11-09 (+199d) |  |  |
| 1046 | **RHD4-02-002-L102-(SL)-Street Lighting duct banks** | 2027-01-21 → 2027-08-10 (+201d) | 2027-02-09 → 2027-08-29 (+201d) |  |  |
| RHD4CZ2L102SL2100 | Excavation of Duct Banks for Street Lighting Network - (RD-L-10/2)-Z2-L102-SL | 2027-01-21 → 2027-08-10 (+201d) | 2027-01-25 → 2027-08-14 (+201d) |  |  |
| RHD4CZ2L102SL2200 | Installation of Duct Banks for Street Lighting Network - (RD-L-10/2)-Z2-L102-SL | 2027-01-26 → 2027-08-15 (+201d) | 2027-02-01 → 2027-08-21 (+201d) |  |  |
| RHD4CZ2L102SL2300 | Pouring of Duct Banks for Street Lighting Network - (RD-L-10/2)-Z2-L102-SL | 2027-02-02 → 2027-08-22 (+201d) | 2027-02-06 → 2027-08-25 (+200d) |  |  |
| RHD4CZ2L102SL2400 | Backfilling of Duct Banks for Street Lighting Network - (RD-L-10/2)-Z2-L102-SL | 2027-02-07 → 2027-08-26 (+200d) | 2027-02-09 → 2027-08-29 (+201d) |  |  |
| 1047 | **RHD4-02-002-L102-(SL)-Street Lighting Drawpit** | 2027-02-07 → 2027-08-26 (+200d) | 2027-02-10 → 2027-08-30 (+201d) |  |  |
| RHD4CZ2L102SL5100 | Excavation of Drawpit size 600x600x900mm for Street Lighting Network - (RD-L-10/2)-Z2-L102-SL | 2027-02-07 → 2027-08-26 (+200d) | 2027-02-08 → 2027-08-28 (+201d) |  |  |
| RHD4CZ2L102SL5200 | Installation of Drawpit size 600x600x900mm for Street Lighting Network - (RD-L-10/2)-Z2-L102-SL | 2027-02-09 → 2027-08-29 (+201d) | 2027-02-10 → 2027-08-30 (+201d) |  |  |
| 1048 | **RHD4-02-002-L102-(SL)-Street Lighting cables** | 2027-03-02 → 2027-09-20 (+202d) | 2027-04-08 → 2027-10-25 (+200d) |  |  |
| RHD4CZ2L102SL3100 | Excavation for Street Lighting Cables for Street Lighting Network - (RD-L-10/2)-Z2-L102-SL | 2027-03-02 → 2027-09-20 (+202d) | 2027-03-15 → 2027-09-30 (+199d) |  |  |
| RHD4CZ2L102SL3200 | Cable Laying of Street Lighting Cables for Street Lighting Network - (RD-L-10/2)-Z2-L102-SL | 2027-03-16 → 2027-10-02 (+200d) | 2027-03-24 → 2027-10-10 (+200d) |  |  |
| RHD4CZ2L102SL3300 | Warning tape and Backfill for Street Lighting Cables for Street Lighting Network - (RD-L-10/2)-Z2-L102-SL | 2027-03-25 → 2027-10-11 (+200d) | 2027-04-03 → 2027-10-19 (+199d) |  |  |
| RHD4CZ2L102SL3400 | Testing of Street Lighting Cables for Street Lighting Network - (RD-L-10/2)-Z2-L102-SL | 2027-04-04 → 2027-10-20 (+199d) | 2027-04-08 → 2027-10-25 (+200d) |  |  |
| 1049 | **RHD4-02-002-L102-(SL)-Street Lighting Poles** | 2027-02-11 → 2027-09-02 (+203d) | 2027-04-24 → 2027-11-09 (+199d) |  |  |
| RHD4CZ2L102SL1100 | Excavation for RC Base for Lighting Poles for Street Lighting Network - (RD-L-10/2)-Z2-L102-SL | 2027-02-11 → 2027-09-02 (+203d) | 2027-02-16 → 2027-09-07 (+203d) |  |  |
| RHD4CZ2L102SL1200 | Installation for RC Base for Lighting Poles for Street Lighting Network - (RD-L-10/2)-Z2-L102-SL | 2027-02-17 → 2027-09-08 (+203d) | 2027-02-23 → 2027-09-13 (+202d) |  |  |
| RHD4CZ2L102SL1300 | Backfill for RC Base for Lighting Poles for Street Lighting Network - (RD-L-10/2)-Z2-L102-SL | 2027-02-24 → 2027-09-14 (+202d) | 2027-03-01 → 2027-09-19 (+202d) |  |  |
| RHD4CZ2L102SL1400 | Installation for Lighting Poles for Street Lighting Network - (RD-L-10/2)-Z2-L102-SL | 2027-04-10 → 2027-10-26 (+199d) | 2027-04-18 → 2027-11-03 (+199d) |  |  |
| RHD4CZ2L102SL1500 | Luminaire Installation for Lighting Poles for Street Lighting Network - (RD-L-10/2)-Z2-L102-SL | 2027-04-19 → 2027-11-04 (+199d) | 2027-04-24 → 2027-11-09 (+199d) |  |  |
| 1051 | **RHD4-02-002-L102-(SL)-Street Lighting Earthing System** | 2027-04-19 → 2027-11-04 (+199d) | 2027-04-20 → 2027-11-06 (+200d) |  |  |
| RHD4CZ2L102SL6100 | Installation of Earthing for Lighting Poles and Fedder Pillers for Street Lighting Network - (RD-L-10/2)-Z2-L102-SL | 2027-04-19 → 2027-11-04 (+199d) | 2027-04-20 → 2027-11-06 (+200d) |  |  |
| 1057 | **RHD4-02-002-Z2-L102-Telecommunications Network - TC** | 2027-04-21 → 2027-11-07 (+200d) | 2027-06-13 → 2027-12-25 (+195d) |  |  |
| 1058 | **RHD4-02-002-L102-(TC)-Telecommunications Ducts** | 2027-04-21 → 2027-11-07 (+200d) | 2027-06-13 → 2027-12-25 (+195d) |  |  |
| RHD4CZ2L102TC2100 | Excavation of HDPE Ducts for Telecom Network - (RD-L-10/2)-Z2-L102-TC | 2027-04-21 → 2027-11-07 (+200d) | 2027-05-08 → 2027-11-23 (+199d) |  |  |
| RHD4CZ2L102TC2200 | Installation of HDPE Ducts for Telecom Network - (RD-L-10/2)-Z2-L102-TC | 2027-05-09 → 2027-11-24 (+199d) | 2027-05-23 → 2027-12-04 (+195d) |  |  |
| RHD4CZ2L102TC2400 | Backfilling of HDPE Ducts for Telecom Network - (RD-L-10/2)-Z2-L102-TC | 2027-05-27 → 2027-12-08 (+195d) | 2027-06-13 → 2027-12-25 (+195d) |  |  |
| 1059 | **RHD4-02-002-L102-(TC)-Telecommunications Manholes** | 2027-05-09 → 2027-11-24 (+199d) | 2027-05-26 → 2027-12-07 (+195d) |  |  |
| RHD4CZ2L102TC5100 | Excavation for Manholes for Telecom Network - (RD-L-10/2)-Z2-L102-TC | 2027-05-09 → 2027-11-24 (+199d) | 2027-05-19 → 2027-11-30 (+195d) |  | resources Skilled labor [15.03 h]; Unskilled Labor [15.03 h]; Equipment Opreator [11.98 h]; Excavator-Poclain [5.99 h]; Dump Truck [5.99 h]; Manhole Type 1 - TC [1.65 nr] → Skilled labor [15.03 h]; Unskilled Labor [15.03 h]; Equipment Opreator [12 h]; Excavator-Poclain [5.99 h]; Dump Truck [5.99 h]; Manhole Type 1 - TC [1.65 nr] |
| RHD4CZ2L102TC5200 | Installation of Manholes for Telecom Network - (RD-L-10/2)-Z2-L102-TC | 2027-05-20 → 2027-12-01 (+195d) | 2027-05-26 → 2027-12-07 (+195d) |  |  |
| 1061 | **RHD4-02-002-Z2-L102-Information and Communication Technologies - ICT** | 2027-04-21 → 2027-11-07 (+200d) | 2027-06-13 → 2027-12-25 (+195d) |  |  |
| 1062 | **RHD4-02-002-L102-(ICT)-Information and Communication Technologies Ducts** | 2027-04-21 → 2027-11-07 (+200d) | 2027-06-13 → 2027-12-25 (+195d) |  |  |
| RHD4CZ2L102ICT2100 | Excavation of HDPE Ducts for ICT Network - (RD-L-10/2)-Z2-L102-ICT | 2027-04-21 → 2027-11-07 (+200d) | 2027-05-08 → 2027-11-23 (+199d) |  |  |
| RHD4CZ2L102ICT2200 | Installation of HDPE Ducts for ICT Network - (RD-L-10/2)-Z2-L102-ICT | 2027-05-09 → 2027-11-24 (+199d) | 2027-05-23 → 2027-12-04 (+195d) |  |  |

| ID | Task | Start | Finish | Other |
| --- | --- | --- | --- | --- |
| RHD4CZ2L102ICT2400 | Backfilling of HDPE Ducts for ICT Network - (RD-L-10/2)-Z2-L102-ICT | 2027-05-27 → 2027-12-08 (+195d) | 2027-06-13 → 2027-12-25 (+195d) |  |
| 1063 | **RHD4-02-002-L102-(ICT)-Information and Communication Technologies Manholes** | 2027-05-09 → 2027-11-24 (+199d) | 2027-05-26 → 2027-12-07 (+195d) |  |
| RHD4CZ2L102ICT5100 | Excavation for Manholes for ICT Network - (RD-L-10/2)-Z2-L102-ICT | 2027-05-09 → 2027-11-24 (+199d) | 2027-05-19 → 2027-11-30 (+195d) | resources Skilled labor [15.03 h]; Unskilled Labor [15.03 h]; Equipment Opreator [11.98 h]; Excavator-Poclain [5.99 h]; Dump Truck [5.99 h]; Manhole Type 1 - ICT [1.65 nr] → Skilled labor [15.03 h]; Unskilled Labor [15.03 h]; Equipment Opreator [12 h]; Excavator-Poclain [5.99 h]; Dump Truck [5.99 h]; Manhole Type 1 - ICT [1.65 nr] |
| RHD4CZ2L102ICT5200 | Installation of Manholes for ICT Network - (RD-L-10/2)-Z2-L102-ICT | 2027-05-20 → 2027-12-01 (+195d) | 2027-05-26 → 2027-12-07 (+195d) |  |
| 1065 | **RHD4-02-002-Z2-L102-Security Network - CCTV** | 2027-06-14 → 2027-12-26 (+195d) | 2027-07-28 → 2028-02-08 (+195d) |  |
| 1066 | **RHD4-02-002-L102-(CCTV)-Civil Works** | 2027-06-14 → 2027-12-26 (+195d) | 2027-06-24 → 2028-01-05 (+195d) |  |
| RHD4CZ2L102CCTV2100 | Civil Works for Security Network - (RD-L-10/2)-Z2-L102-CCTV | 2027-06-14 → 2027-12-26 (+195d) | 2027-06-24 → 2028-01-05 (+195d) |  |
| 1067 | **RHD4-02-002-L102-(CCTV)-CCTV Poles** | 2027-06-26 → 2028-01-06 (+194d) | 2027-07-06 → 2028-01-17 (+195d) |  |
| RHD4CZ2L102CCTV1100 | Excavation for RC Base for CCTV Poles for Security Network - (RD-L-10/2)-Z2-L102-CCTV | 2027-06-26 → 2028-01-06 (+194d) | 2027-06-27 → 2028-01-08 (+195d) |  |
| RHD4CZ2L102CCTV1200 | Installation for RC Base for CCTV Poles for Security Network - (RD-L-10/2)-Z2-L102-CCTV | 2027-06-28 → 2028-01-09 (+195d) | 2027-06-29 → 2028-01-10 (+195d) |  |
| RHD4CZ2L102CCTV1300 | Backfill for RC Base for CCTV Poles for Security Network - (RD-L-10/2)-Z2-L102-CCTV | 2027-06-30 → 2028-01-11 (+195d) | 2027-07-01 → 2028-01-12 (+195d) |  |
| RHD4CZ2L102CCTV1400 | Installation for CCTV Poles for Security Network - (RD-L-10/2)-Z2-L102-CCTV | 2027-07-03 → 2028-01-13 (+194d) | 2027-07-04 → 2028-01-15 (+195d) |  |
| RHD4CZ2L102CCTV1500 | Protection post Installation for CCTV Poles for Security Network - (RD-L-10/2)-Z2-L102-CCTV | 2027-07-05 → 2028-01-16 (+195d) | 2027-07-06 → 2028-01-17 (+195d) |  |
| 1068 | **RHD4-02-002-L102-(CCTV)-Camera** | 2027-07-10 → 2028-01-20 (+194d) | 2027-07-11 → 2028-01-22 (+195d) |  |
| RHD4CZ2L102CCTV3100 | Installation for Cameras for Security Network - (RD-L-10/2)-Z2-L102-CCTV | 2027-07-10 → 2028-01-20 (+194d) | 2027-07-11 → 2028-01-22 (+195d) |  |
| 1069 | **RHD4-02-002-L102-(CCTV)-Power and Infrastructure** | 2027-07-05 → 2028-01-16 (+195d) | 2027-07-08 → 2028-01-19 (+195d) |  |
| RHD4CZ2L102CCTV4100 | Installation of Power outlet, UPS and midspan for PTZ Camerafor Cameras for Security Network - (RD-L-10/2)-Z2-L102-CCTV | 2027-07-05 → 2028-01-16 (+195d) | 2027-07-06 → 2028-01-17 (+195d) |  |
| RHD4CZ2L102CCTV4200 | Short Range Wireless PoP wireless Bridgefor CCTV Poles for Security Network - (RD-L-10/2)-Z2-L102-CCTV | 2027-07-07 → 2028-01-18 (+195d) | 2027-07-08 → 2028-01-19 (+195d) |  |
| 1071 | **RHD4-02-002-L102-(CCTV)-CCTV Panels and Components** | 2027-07-12 → 2028-01-23 (+195d) | 2027-07-28 → 2028-02-08 (+195d) |  |
| RHD4CZ2L102CCTV6100 | Installation for CCTV Panels for Security Network - (RD-L-10/2)-Z2-L102-CCTV | 2027-07-12 → 2028-01-23 (+195d) | 2027-07-28 → 2028-02-08 (+195d) |  |
| 1082 | **RHD4-02-002-Z2-L011** | 2026-08-25 → 2027-01-03 (+131d) | 2027-01-25 → 2027-07-12 (+168d) |  |
| 1261 | **RHD4-02-002-Z2-L011-Road Works - RD** | 2026-09-22 → 2027-02-28 (+159d) | 2027-01-25 → 2027-07-12 (+168d) |  |
| 1262 | **RHD4-02-002-L011-(RD)-Subgrade** | 2026-09-22 → 2027-02-28 (+159d) | 2026-09-24 → 2027-03-01 (+158d) |  |
| RHD4CZ2L011RD1100 | Supply, lay and compaction subgrade compacted thickness 300 mm for Roads - (RD-L-11)-Z2-L011-RD | 2026-09-22 → 2027-02-28 (+159d) | 2026-09-24 → 2027-03-01 (+158d) |  |
| 1263 | **RHD4-02-002-L011-(RD)-Aggregate Base Course** | 2026-09-26 → 2027-03-02 (+157d) | 2026-09-27 → 2027-03-03 (+157d) |  |
| RHD4CZ2L011RD2100 | Supply, lay and compaction Aggregate base course compacted thickness 300 mmfor Roads - (RD-L-11)-Z2-L011-RD | 2026-09-26 → 2027-03-02 (+157d) | 2026-09-27 → 2027-03-03 (+157d) |  |
| 1264 | **RHD4-02-002-L011-(RD)-Bituminous base course Two Layers, including (MC1)&(RC2)** | 2026-09-29 → 2027-04-06 (+189d) | 2027-01-14 → 2027-07-01 (+168d) |  |
| RHD4CZ2L011RD3100 | Supply, lay and Asphaltic base course including Prime Coat (MC1) for 1st Layer - (RD-L-11)-Z2-L011-RD | 2026-09-29 → 2027-04-06 (+189d) | 2026-09-30 → 2027-04-07 (+189d) |  |
| RHD4CZ2L011RD3200 | Supply, lay and Asphaltic base course including Tack Coat (RC2) for 2nd Layer - (RD-L-11)-Z2-L011-RD | 2027-01-13 → 2027-06-30 (+168d) | 2027-01-14 → 2027-07-01 (+168d) |  |
| 1266 | **RHD4-02-002-L011-(RD)-Precast Concrete Curb** | 2027-01-16 → 2027-07-03 (+168d) | 2027-01-18 → 2027-07-05 (+168d) |  |
| RHD4CZ2L011RD5100 | Supply and installation Precast Concrete Kerb for Roads - (RD-L-11)-Z2-L011-RD | 2027-01-16 → 2027-07-03 (+168d) | 2027-01-18 → 2027-07-05 (+168d) |  |
| 1269 | **RHD4-02-002-L011-(RD)-Traffic Signage** | 2027-01-19 → 2027-07-06 (+168d) | 2027-01-25 → 2027-07-12 (+168d) |  |
| RHD4CZ2L011RD8100 | Installation of Traffic Signage for Road Network - (RD-L-11)-Z2-L011-RD | 2027-01-19 → 2027-07-06 (+168d) | 2027-01-25 → 2027-07-12 (+168d) | resources Skilled labor [130.68 h]; Unskilled Labor [65.34 h]; Electrician [15.25 h]; Equipment Opreator [19.17 h]; Boom Truck [13.07 h]; Concrete Mixer Truck [6.1 h]; Traffic signs, ground mounted, 1 Sheet Aluminium, (breakaway)Single post [13 nr] → Skilled labor [130.68 h]; Unskilled Labor [65.34 h]; Electrician [15.25 h]; Equipment Opreator [19.2 h]; Boom Truck [13.07 h]; Concrete Mixer Truck [6.1 h]; Traffic signs, ground mounted, 1 Sheet Aluminium, (breakaway)Single post [13 nr] |
| 1265 | **RHD4-02-002-L011-(RD)-Bituminous concrete wearing course including tack coat (RC2)** | 2027-01-19 → 2027-07-06 (+168d) | 2027-01-20 → 2027-07-07 (+168d) |  |
| RHD4CZ2L011RD4100 | Supply, lay and compaction Asphaltic wearing course including tack Coat (RC2)for Road Network - (RD-L-11)-Z2-L011-RD | 2027-01-19 → 2027-07-06 (+168d) | 2027-01-20 → 2027-07-07 (+168d) |  |
| 1268 | **RHD4-02-002-L011-(RD)-Pavement Marking** | 2027-01-21 → 2027-07-08 (+168d) | 2027-01-23 → 2027-07-10 (+168d) |  |
| RHD4CZ2L011RD7100 | Pavement Markings for Road Network - (RD-L-11)-Z2-L011-RD | 2027-01-21 → 2027-07-08 (+168d) | 2027-01-23 → 2027-07-10 (+168d) |  |
| 1086 | **RHD4-02-002-Z2-L011-Storm Network - ST** | 2026-08-25 → 2027-01-03 (+131d) | 2026-09-16 → 2027-01-25 (+131d) |  |
| 1103 | **RHD4-02-002-L011-(ST)-MH Works - 1200 mm diameter** | 2026-08-25 → 2027-01-03 (+131d) | 2026-09-16 → 2027-01-25 (+131d) |  |
| RHD4CZ2L011ST3100 | Excavation and PC Blinding works for MH 1200 mm - (RD-L-11)-Z2-L011-ST | 2026-08-25 → 2027-01-03 (+131d) | 2026-08-26 → 2027-01-04 (+131d) | resources Skilled labor [7.3 h]; Unskilled Labor [7.3 h]; Equipment Opreator [11.65 h]; Excavator-Poclain [7.3 h]; Water Truck [0.76 h]; Dump Truck [3.59 h]; MH (1200mm Diameter) - ST - depth 1.50 - 2.5m [0.5 nr] → Skilled labor [7.3 h]; Unskilled Labor [7.3 h]; Equipment Opreator [11.65 h]; Excavator-Poclain [7.3 h]; Water Truck [0.8 h]; Dump Truck [3.59 h]; MH (1200mm Diameter) - ST - depth 1.50 - 2.5m [0.5 nr] |
| RHD4CZ2L011ST3200 | Installation of Base for MH 1200 mm - (RD-L-11)-Z2-L011-ST | 2026-08-27 → 2027-01-05 (+131d) | 2026-08-29 → 2027-01-06 (+130d) |  |
| RHD4CZ2L011ST3300 | MH Ring and C.Slab works and Backfilling works for MH 1200 mm - (RD-L-11)-Z2-L011-ST | 2026-08-30 → 2027-01-07 (+130d) | 2026-08-31 → 2027-01-09 (+131d) |  |
| RHD4CZ2L011ST3400 | Steel Cover for MH 1200 mm - (RD-L-11)-Z2-L011-ST | 2026-09-13 → 2027-01-21 (+130d) | 2026-09-14 → 2027-01-23 (+131d) |  |
| RHD4CZ2L011ST3500 | Finishing, Benching, Testing works for MH 1200 mm - (RD-L-11)-Z2-L011-ST | 2026-09-15 → 2027-01-24 (+131d) | 2026-09-16 → 2027-01-25 (+131d) |  |
| 1087 | **RHD4-02-002-L011-(ST)-GRP Pipes - 400 mm diameter** | 2026-08-30 → 2027-01-07 (+130d) | 2026-09-09 → 2027-01-18 (+131d) |  |
| RHD4CZ2L011ST1100 | Excavation works for GRP Pipe Line 400 mm - (RD-L-11)-Z2-L011-ST | 2026-08-30 → 2027-01-07 (+130d) | 2026-08-31 → 2027-01-09 (+131d) |  |
| RHD4CZ2L011ST1200 | Bedding works for GRP Pipe Line 400 mm - (RD-L-11)-Z2-L011-ST | 2026-09-01 → 2027-01-10 (+131d) | 2026-09-02 → 2027-01-11 (+131d) |  |
| RHD4CZ2L011ST1300 | Installing for GRP Pipe Line 400 mm - (RD-L-11)-Z2-L011-ST | 2026-09-03 → 2027-01-12 (+131d) | 2026-09-05 → 2027-01-13 (+130d) |  |
| RHD4CZ2L011ST1400 | Primary Test for GRP Pipe Line 400 mm - (RD-L-11)-Z2-L011-ST | 2026-09-06 → 2027-01-14 (+130d) | 2026-09-07 → 2027-01-16 (+131d) |  |
| RHD4CZ2L011ST1500 | Backfilling and warning tape works for GRP Pipe Line 400 mm - (RD-L-11)-Z2-L011-ST | 2026-09-08 → 2027-01-17 (+131d) | 2026-09-09 → 2027-01-18 (+131d) |  |
| 1101 | **RHD4-02-002-L011-(ST)-UPVC Pipes - 300 mm diameter** | 2026-09-01 → 2027-01-10 (+131d) | 2026-09-12 → 2027-01-20 (+130d) |  |
| RHD4CZ2L011ST2100 | Excavation works for UPVC Pipe Line 300 mm - (RD-L-11)-Z2-L011-ST | 2026-09-01 → 2027-01-10 (+131d) | 2026-09-02 → 2027-01-11 (+131d) |  |
| RHD4CZ2L011ST2200 | Bedding works for UPVC Pipe Line 300 mm - (RD-L-11)-Z2-L011-ST | 2026-09-03 → 2027-01-12 (+131d) | 2026-09-05 → 2027-01-13 (+130d) |  |
| RHD4CZ2L011ST2300 | Installing for UPVC Pipe Line 300 mm - (RD-L-11)-Z2-L011-ST | 2026-09-06 → 2027-01-14 (+130d) | 2026-09-07 → 2027-01-16 (+131d) |  |
| RHD4CZ2L011ST2400 | Primary Test for UPVC Pipe Line 300 mm - (RD-L-11)-Z2-L011-ST | 2026-09-08 → 2027-01-17 (+131d) | 2026-09-09 → 2027-01-18 (+131d) |  |
| RHD4CZ2L011ST2500 | Backfilling and warning tape works for UPVC Pipe Line 300 mm - (RD-L-11)-Z2-L011-ST | 2026-09-10 → 2027-01-19 (+131d) | 2026-09-12 → 2027-01-20 (+130d) |  |
| 1110 | **RHD4-02-002-Z2-L011-Catch Basin - ST** | 2026-09-01 → 2027-01-10 (+131d) | 2026-09-12 → 2027-01-20 (+130d) |  |
| 1111 | **RHD4-02-002-L011-(ST)-Single Catch Basin Works** | 2026-09-01 → 2027-01-10 (+131d) | 2026-09-12 → 2027-01-20 (+130d) |  |
| RHD4CZ2L011ST7100 | Excavation works for Single Catch Basin - (RD-L-11)-Z2-L011-ST | 2026-09-01 → 2027-01-10 (+131d) | 2026-09-02 → 2027-01-11 (+131d) |  |
| RHD4CZ2L011ST7200 | PC Blinding, Installation and Pipe connection for Single Catch Basin - (RD-L-11)-Z2-L011-ST | 2026-09-03 → 2027-01-12 (+131d) | 2026-09-05 → 2027-01-13 (+130d) |  |
| RHD4CZ2L011ST7300 | Rings & C.Slab & Final Backfill for Single Catch Basin - (RD-L-11)-Z2-L011-ST | 2026-09-06 → 2027-01-14 (+130d) | 2026-09-07 → 2027-01-16 (+131d) |  |
| RHD4CZ2L011ST7400 | Steel Cover for Single Catch Basin - (RD-L-11)-Z2-L011-ST | 2026-09-08 → 2027-01-17 (+131d) | 2026-09-09 → 2027-01-18 (+131d) |  |
| RHD4CZ2L011ST7500 | Finishing and Insulation works for Single Catch Basin - (RD-L-11)-Z2-L011-ST | 2026-09-10 → 2027-01-19 (+131d) | 2026-09-12 → 2027-01-20 (+130d) |  |
| 1172 | **RHD4-02-002-Z2-L011-Potable Network - PT** | 2026-09-17 → 2027-01-26 (+131d) | 2026-10-29 → 2027-03-13 (+135d) |  |
| 1174 | **RHD4-02-002-L011-(PT)-HDPE Pipes - 160 mm diameter** | 2026-09-17 → 2027-01-26 (+131d) | 2026-09-29 → 2027-02-06 (+130d) |  |
| RHD4CZ2L011PT1101 | Excavation works for HDPE Pipline 160 mm - (RD-L-11)-Z2-L011-PT | 2026-09-17 → 2027-01-26 (+131d) | 2026-09-19 → 2027-01-27 (+130d) |  |
| RHD4CZ2L011PT1201 | Bedding works for HDPE Pipline 160 mm - (RD-L-11)-Z2-L011-PT | 2026-09-20 → 2027-01-28 (+130d) | 2026-09-21 → 2027-01-30 (+131d) | resources Skilled labor [7.19 h]; Unskilled Labor [14.48 h]; Equipment Opreator [14.48 h]; Excavator-Poclain [7.19 h]; Dump Truck [7.19 h]; HDPE (160mm Diameter) - PT - Depth: less than 1.5m [9.94 m] → Skilled labor [7.2 h]; Unskilled Labor [14.48 h]; Equipment Opreator [14.48 h]; Excavator-Poclain [7.2 h]; Dump Truck [7.2 h]; HDPE (160mm Diameter) - PT - Depth: less than 1.5m [9.94 m] |
| RHD4CZ2L011PT1301 | Installing for HDPE Pipline 160 mm - (RD-L-11)-Z2-L011-PT | 2026-09-22 → 2027-01-31 (+131d) | 2026-09-24 → 2027-02-01 (+130d) |  |
| RHD4CZ2L011PT1401 | Primary Test for HDPE Pipline 160 mm - (RD-L-11)-Z2-L011-PT | 2026-09-26 → 2027-02-02 (+129d) | 2026-09-27 → 2027-02-03 (+129d) |  |
| RHD4CZ2L011PT1501 | Backfilling and warning tape works for HDPE Pipline 160 mm - (RD-L-11)-Z2-L011-PT | 2026-09-28 → 2027-02-04 (+129d) | 2026-09-29 → 2027-02-06 (+130d) |  |

| ID | Task | Start | Finish | Duration | Other |
| --- | --- | --- | --- | --- | --- |
| 1178 | **RHD4-02-002-L011-(PT)-Gate Valves (Direct Buried)** | 2026-09-30 → 2027-02-07 (+130d) | 2026-10-04 → 2027-02-10 (+129d) |  |  |
| RHD4CZ2L011PT3100 | Installation for Direct Buried Gate Valves - (RD-L-11)-Z2-L011-PT | 2026-09-30 → 2027-02-07 (+130d) | 2026-10-01 → 2027-02-08 (+130d) |  |  |
| RHD4CZ2L011PT3200 | Stem and Service box for Direct Buried Gate Valves - (RD-L-11)-Z2-L011-PT | 2026-10-03 → 2027-02-09 (+129d) | 2026-10-04 → 2027-02-10 (+129d) |  |  |
| 1183 | **RHD4-02-002-L011-(PT)-Air Valve Chambers** | 2026-10-05 → 2027-02-11 (+129d) | 2026-10-13 → 2027-02-20 (+130d) |  |  |
| RHD4CZ2L011PT2102 | Excavation and Bedding for Air Valve Chambers for Potable Water Network - (RD-L-11)-Z2-L011-PT | 2026-10-05 → 2027-02-11 (+129d) | 2026-10-06 → 2027-02-13 (+130d) |  |  |
| RHD4CZ2L011PT2202 | PC works for Air Valve Chambers for Potable Water Network - (RD-L-11)-Z2-L011-PT | 2026-10-07 → 2027-02-14 (+130d) | 2026-10-08 → 2027-02-15 (+130d) |  |  |
| RHD4CZ2L011PT2302 | Installation for Air Valve Chambers for Potable Water Network - (RD-L-11)-Z2-L011-PT | 2026-10-10 → 2027-02-16 (+129d) | 2026-10-11 → 2027-02-17 (+129d) |  |  |
| RHD4CZ2L011PT2402 | Backfilling works for Air Valve Chambers for Potable Water Network - (RD-L-11)-Z2-L011-PT | 2026-10-12 → 2027-02-18 (+129d) | 2026-10-13 → 2027-02-20 (+130d) |  |  |
| 1184 | **RHD4-02-002-L011-(PT)-Air Valves** | 2026-10-14 → 2027-02-21 (+130d) | 2026-10-18 → 2027-02-25 (+130d) |  |  |
| RHD4CZ2L011PT3103 | Installation for Air Valves for Potable Water Network - (RD-L-11)-Z2-L011-PT | 2026-10-14 → 2027-02-21 (+130d) | 2026-10-15 → 2027-02-23 (+131d) |  |  |
| RHD4CZ2L011PT3203 | Stem and Service box for Air Valves for Potable Water Network - (RD-L-11)-Z2-L011-PT | 2026-10-17 → 2027-02-24 (+130d) | 2026-10-18 → 2027-02-25 (+130d) |  |  |
| 1185 | **RHD4-02-002-L011-(PT)-Fire Hydrant** | 2026-10-19 → 2027-02-27 (+131d) | 2026-10-29 → 2027-03-13 (+135d) |  |  |
| RHD4CZ2L011PT4100 | Excavation and Bedding and Pipe Installation for Fire Hydrant - (RD-L-11)-Z2-L011-PT | 2026-10-19 → 2027-02-27 (+131d) | 2026-10-20 → 2027-02-28 (+131d) |  |  |
| RHD4CZ2L011PT4200 | Valve Installation for Fire Hydrant - (RD-L-11)-Z2-L011-PT | 2026-10-21 → 2027-03-01 (+131d) | 2026-10-22 → 2027-03-02 (+131d) |  |  |
| RHD4CZ2L011PT4300 | Stem for Fire Hydrant - (RD-L-11)-Z2-L011-PT | 2026-10-24 → 2027-03-03 (+130d) | 2026-10-25 → 2027-03-04 (+130d) |  |  |
| RHD4CZ2L011PT4400 | Fire Installation for Fire Hydrant - (RD-L-11)-Z2-L011-PT | 2026-10-26 → 2027-03-06 (+131d) | 2026-10-27 → 2027-03-07 (+131d) |  |  |
| RHD4CZ2L011PT4500 | Protection Barriers for Fire Hydrant - (RD-L-11)-Z2-L011-PT | 2026-10-28 → 2027-03-08 (+131d) | 2026-10-29 → 2027-03-13 (+135d) |  |  |
| 1221 | **RHD4-02-002-Z2-L011-Medium Voltage Network - MV** | 2026-10-14 → 2027-02-21 (+130d) | 2026-11-30 → 2027-05-12 (+163d) |  |  |
| 1222 | **RHD4-02-002-L011-(MV)-Medium Voltage cable trench** | 2026-10-31 → 2027-04-08 (+159d) | 2026-11-16 → 2027-04-25 (+160d) |  |  |
| RHD4CZ2L011MV1100 | Excavation for Medium Voltage Trench - (RD-L-11)-Z2-L011-MV | 2026-10-31 → 2027-04-08 (+159d) | 2026-11-03 → 2027-04-12 (+160d) |  |  |
| RHD4CZ2L011MV1200 | Trench Backfilling for Medium Voltage Network - (RD-L-11)-Z2-L011-MV | 2026-11-12 → 2027-04-21 (+160d) | 2026-11-16 → 2027-04-25 (+160d) |  |  |
| 1223 | **RHD4-02-002-L011-(MV)-Medium Voltage duct banks** | 2026-10-14 → 2027-02-21 (+130d) | 2026-10-22 → 2027-03-02 (+131d) |  |  |
| RHD4CZ2L011MV2100 | Excavation of Duct Banks for Medium Voltage Network - (RD-L-11)-Z2-L011-MV | 2026-10-14 → 2027-02-21 (+130d) | 2026-10-15 → 2027-02-23 (+131d) |  |  |
| RHD4CZ2L011MV2200 | Installation of Duct Banks for Medium Voltage Network - (RD-L-11)-Z2-L011-MV | 2026-10-17 → 2027-02-24 (+130d) | 2026-10-18 → 2027-02-25 (+130d) |  |  |
| RHD4CZ2L011MV2300 | Pouring of Duct Banks for Medium Voltage Network - (RD-L-11)-Z2-L011-MV | 2026-10-19 → 2027-02-27 (+131d) | 2026-10-20 → 2027-02-28 (+131d) |  |  |
| RHD4CZ2L011MV2400 | Backfilling of Duct Banks for Medium Voltage Network - (RD-L-11)-Z2-L011-MV | 2026-10-21 → 2027-03-01 (+131d) | 2026-10-22 → 2027-03-02 (+131d) |  |  |
| 1224 | **RHD4-02-002-L011-(MV)-Medium Voltage cables 3Cx 500 mm²** | 2026-11-04 → 2027-04-13 (+160d) | 2026-11-18 → 2027-04-27 (+160d) |  |  |
| RHD4CZ2L011MV3100 | Installation of Medium Voltage Cables 3Cx 500 mm² - (RD-L-11)-Z2-L011-MV | 2026-11-04 → 2027-04-13 (+160d) | 2026-11-09 → 2027-04-18 (+160d) |  |  |
| RHD4CZ2L011MV3200 | Joints Installation of Medium Voltage Cables 3Cx 500 mm² - (RD-L-11)-Z2-L011-MV | 2026-11-10 → 2027-04-19 (+160d) | 2026-11-11 → 2027-04-20 (+160d) |  |  |
| RHD4CZ2L011MV3300 | Testing of Medium Voltage Cables 3Cx 500 mm² - (RD-L-11)-Z2-L011-MV | 2026-11-17 → 2027-04-26 (+160d) | 2026-11-18 → 2027-04-27 (+160d) |  |  |
| 4254 | **RHD4-02-002-L011-(MV)-Unit Substations** | 2026-11-19 → 2027-04-28 (+160d) | 2026-11-30 → 2027-05-12 (+163d) |  |  |
| RHD4CZ2L011MV5100 | Excavation for Unit Substations for Medium Voltage Network - (RD-L-11)-Z2-L011-MV | 2026-11-19 → 2027-04-28 (+160d) | 2026-11-21 → 2027-04-29 (+159d) |  |  |
| RHD4CZ2L011MV5200 | Concrete Base Placement for Unit Substations for Medium Voltage Network - (RD-L-11)-Z2-L011-MV | 2026-11-22 → 2027-05-01 (+160d) | 2026-11-23 → 2027-05-02 (+160d) |  |  |
| RHD4CZ2L011MV5300 | Installation for Fences and doors for Medium Voltage Network - (RD-L-11)-Z2-L011-MV | 2026-11-24 → 2027-05-03 (+160d) | 2026-11-25 → 2027-05-08 (+164d) | 2d → 5d |  |
| RHD4CZ2L011MV5400 | Installation for Unit Substations for Medium Voltage Network - (RD-L-11)-Z2-L011-MV | 2026-11-26 → 2027-05-09 (+164d) | 2026-11-30 → 2027-05-12 (+163d) |  |  |
| 1228 | **RHD4-02-002-Z2-L011-Low Voltage Network - LV** | 2026-12-01 → 2027-05-13 (+163d) | 2027-01-09 → 2027-06-26 (+168d) |  |  |
| 1229 | **RHD4-02-002-L011-(LV)-Low Voltage duct banks** | 2026-12-01 → 2027-05-13 (+163d) | 2026-12-19 → 2027-06-05 (+168d) |  |  |
| RHD4CZ2L011LV2100 | Excavation of Duct Banks for Low Voltage Network - (RD-L-11)-Z2-L011-LV | 2026-12-01 → 2027-05-13 (+163d) | 2026-12-05 → 2027-05-22 (+168d) |  |  |
| RHD4CZ2L011LV2200 | Installation of Duct Banks for Low Voltage Network - (RD-L-11)-Z2-L011-LV | 2026-12-06 → 2027-05-23 (+168d) | 2026-12-10 → 2027-05-27 (+168d) |  |  |
| RHD4CZ2L011LV2300 | Pouring of Duct Banks for Low Voltage Network - (RD-L-11)-Z2-L011-LV | 2026-12-12 → 2027-05-29 (+168d) | 2026-12-15 → 2027-06-01 (+168d) |  |  |
| RHD4CZ2L011LV2400 | Backfilling of Duct Banks for Low Voltage Network - (RD-L-11)-Z2-L011-LV | 2026-12-16 → 2027-06-02 (+168d) | 2026-12-19 → 2027-06-05 (+168d) |  |  |
| 1230 | **RHD4-02-002-L011-(LV)-Low Voltage Drawpit** | 2026-12-16 → 2027-06-02 (+168d) | 2026-12-20 → 2027-06-06 (+168d) |  |  |
| RHD4CZ2L011LV5100 | Excavation of Drawpit size 900x900x1000mm for Low Voltage Network - (RD-L-11)-Z2-L011-LV | 2026-12-16 → 2027-06-02 (+168d) | 2026-12-17 → 2027-06-03 (+168d) |  |  |
| RHD4CZ2L011LV5200 | Installation of Drawpit size 900x900x1000mm for Low Voltage Network - (RD-L-11)-Z2-L011-LV | 2026-12-19 → 2027-06-05 (+168d) | 2026-12-20 → 2027-06-06 (+168d) |  |  |
| 1231 | **RHD4-02-002-L011-(LV)-Low Voltage cables** | 2026-12-01 → 2027-05-13 (+163d) | 2026-12-27 → 2027-06-13 (+168d) |  |  |
| RHD4CZ2L011LV3100 | Excavation for Low Voltage Cables for Low Voltage Network - (RD-L-11)-Z2-L011-LV | 2026-12-01 → 2027-05-13 (+163d) | 2026-12-03 → 2027-05-20 (+168d) |  |  |
| RHD4CZ2L011LV3200 | Cable Laying of Low Voltage Cables for Low Voltage Network - (RD-L-11)-Z2-L011-LV | 2026-12-21 → 2027-06-07 (+168d) | 2026-12-22 → 2027-06-08 (+168d) |  | resources Skilled labor [18.73 h]; Unskilled Labor [75.14 h]; Electrician [37.57 h]; Equipment Opreator [56.3 h]; Boom Truck [18.73 h]; Cable Laying Machine [37.57 h]; Cable, Copper 4x185mm2/ CU/XLPE/PVC [92.1 m]; Cable, Copper 4x70mm2/ CU/XLPE/PVC [86.79 m]; Cable, Copper 4x50mm2/ CU/XLPE/PVC +1x25mm2 CU/PVC [57.13 m]; Cable, Copper 3x10mm2/ CU/XLPE/SWA/PVC [74.39 m] → Skilled labor [18.73 h]; Unskilled Labor [75.14 h]; Electrician [37.6 h]; Equipment Opreator [56.3 h]; Boom Truck [18.73 h]; Cable Laying Machine [37.6 h]; Cable, Copper 4x185mm2/ CU/XLPE/PVC [92.1 m]; Cable, Copper 4x70mm2/ CU/XLPE/PVC [86.79 m]; Cable, Copper 4x50mm2/ CU/XLPE/PVC +1x25mm2 CU/PVC [57.13 m]; Cable, Copper 3x10mm2/ CU/XLPE/SWA/PVC [74.39 m] |
| RHD4CZ2L011LV3300 | Warning tape and Backfill for Low Voltage Cables for Low Voltage Network - (RD-L-11)-Z2-L011-LV | 2026-12-23 → 2027-06-09 (+168d) | 2026-12-24 → 2027-06-10 (+168d) |  | resources Skilled labor [18.73 h]; Unskilled Labor [75.14 h]; Electrician [37.57 h]; Equipment Opreator [18.73 h]; Boom Truck [18.73 h]; Cable, Copper 4x185mm2/ CU/XLPE/PVC [23.02 m]; Cable, Copper 4x70mm2/ CU/XLPE/PVC [21.7 m]; Cable, Copper 4x50mm2/ CU/XLPE/PVC +1x25mm2 CU/PVC [14.28 m]; Cable, Copper 3x10mm2/ CU/XLPE/SWA/PVC [18.6 m] → Skilled labor [18.73 h]; Unskilled Labor [75.14 h]; Electrician [37.6 h]; Equipment Opreator [18.73 h]; Boom Truck [18.73 h]; Cable, Copper 4x185mm2/ CU/XLPE/PVC [23.02 m]; Cable, Copper 4x70mm2/ CU/XLPE/PVC [21.7 m]; Cable, Copper 4x50mm2/ CU/XLPE/PVC +1x25mm2 CU/PVC [14.28 m]; Cable, Copper 3x10mm2/ CU/XLPE/SWA/PVC [18.6 m] |
| RHD4CZ2L011LV3400 | Testing of Low Voltage Cables for Low Voltage Network - (RD-L-11)-Z2-L011-LV | 2026-12-26 → 2027-06-12 (+168d) | 2026-12-27 → 2027-06-13 (+168d) |  | resources Skilled labor [11.22 h]; Unskilled Labor [45.09 h]; Electrician [22.54 h]; Equipment Opreator [11.22 h]; Boom Truck [11.22 h]; Cable, Copper 4x185mm2/ CU/XLPE/PVC [7.67 m]; Cable, Copper 4x70mm2/ CU/XLPE/PVC [7.23 m]; Cable, Copper 4x50mm2/ CU/XLPE/PVC +1x25mm2 CU/PVC [4.76 m]; Cable, Copper 3x10mm2/ CU/XLPE/SWA/PVC [6.2 m] → Skilled labor [11.2 h]; Unskilled Labor [45.09 h]; Electrician [22.54 h]; Equipment Opreator [11.2 h]; Boom Truck [11.2 h]; Cable, Copper 4x185mm2/ CU/XLPE/PVC [7.67 m]; Cable, Copper 4x70mm2/ CU/XLPE/PVC [7.23 m]; Cable, Copper 4x50mm2/ CU/XLPE/PVC +1x25mm2 CU/PVC [4.76 m]; Cable, Copper 3x10mm2/ CU/XLPE/SWA/PVC [6.2 m] |
| 4259 | **RHD4-02-002-L011-(LV)-Low Voltage Distribution Pillars** | 2026-12-28 → 2027-06-14 (+168d) | 2027-01-09 → 2027-06-26 (+168d) |  |  |
| RHD4CZ2L011LV4100 | Leveling for Distribution Pillars for Low Voltage Network - (RD-L-11)-Z2-L011-LV | 2026-12-28 → 2027-06-14 (+168d) | 2026-12-31 → 2027-06-17 (+168d) |  |  |
| RHD4CZ2L011LV4200 | Lean Concrete for Distribution Pillars for Low Voltage Network - (RD-L-11)-Z2-L011-LV | 2027-01-02 → 2027-06-19 (+168d) | 2027-01-04 → 2027-06-21 (+168d) |  |  |
| RHD4CZ2L011LV4300 | Installation of Distribution Pillars for Low Voltage Network - (RD-L-11)-Z2-L011-LV | 2027-01-05 → 2027-06-22 (+168d) | 2027-01-09 → 2027-06-26 (+168d) |  |  |
| 1234 | **RHD4-02-002-Z2-L011-Street Lighting Network - SL** | 2026-12-01 → 2027-05-13 (+163d) | 2027-01-03 → 2027-06-20 (+168d) |  |  |
| 1236 | **RHD4-02-002-L011-(SL)-Street Lighting Drawpit** | 2026-12-01 → 2027-05-13 (+163d) | 2026-12-05 → 2027-05-22 (+168d) |  |  |
| RHD4CZ2L011SL5100 | Excavation of Drawpit size 600x600x900mm for Street Lighting Network - (RD-L-11)-Z2-L011-SL | 2026-12-01 → 2027-05-13 (+163d) | 2026-12-02 → 2027-05-19 (+168d) |  | resources Skilled labor [1.85 h]; Unskilled Labor [1.85 h]; Equipment Opreator [1.42 h]; Excavator-Poclain [0.76 h]; Dump Truck [0.76 h]; Drawpit with medium duty steel cover, size600x600x900mm, [0.3 Unit] → Skilled labor [1.85 h]; Unskilled Labor [1.85 h]; Equipment Opreator [1.42 h]; Excavator-Poclain [0.8 h]; Dump Truck [0.8 h]; Drawpit with medium duty steel cover, size600x600x900mm, [0.3 Unit] |
| RHD4CZ2L011SL5200 | Installation of Drawpit size 600x600x900mm for Street Lighting Network - (RD-L-11)-Z2-L011-SL | 2026-12-03 → 2027-05-20 (+168d) | 2026-12-05 → 2027-05-22 (+168d) |  | resources Skilled labor [1.85 h]; Unskilled Labor [1.85 h]; Equipment Opreator [0.76 h]; Boom Truck [0.76 h]; Drawpit with medium duty steel cover, size600x600x900mm, [1.7 Unit] → Skilled labor [1.85 h]; Unskilled Labor [1.85 h]; Equipment Opreator [0.8 h]; Boom Truck [0.8 h]; Drawpit with medium duty steel cover, size600x600x900mm, [1.7 Unit] |
| 1237 | **RHD4-02-002-L011-(SL)-Street Lighting cables** | 2026-12-08 → 2027-05-25 (+168d) | 2026-12-29 → 2027-06-15 (+168d) |  |  |
| RHD4CZ2L011SL3100 | Excavation for Street Lighting Cables for Street Lighting Network - (RD-L-11)-Z2-L011-SL | 2026-12-08 → 2027-05-25 (+168d) | 2026-12-12 → 2027-05-29 (+168d) |  |  |
| RHD4CZ2L011SL3200 | Cable Laying of Street Lighting Cables for Street Lighting Network - (RD-L-11)-Z2-L011-SL | 2026-12-13 → 2027-05-30 (+168d) | 2026-12-15 → 2027-06-01 (+168d) |  | resources Skilled labor [32.24 h]; Unskilled Labor [128.83 h]; Electrician [64.47 h]; Equipment Opreator [96.6 h]; Boom Truck [32.24 h]; Cable Laying Machine [64.47 h]; Cable, Copper 4x10mm2/ CU/XLPE/SWA/PVC + 1x10mm2 CU/PVC [532.39 m] → Skilled labor [32.24 h]; Unskilled Labor [128.8 h]; Electrician [64.47 h]; Equipment Opreator [96.6 h]; Boom Truck [32.24 h]; Cable Laying Machine [64.47 h]; Cable, Copper 4x10mm2/ CU/XLPE/SWA/PVC + 1x10mm2 CU/PVC [532.39 m] |
| RHD4CZ2L011SL3300 | Warning tape and Backfill for Street Lighting Cables for Street Lighting Network - (RD-L-11)-Z2-L011-SL | 2026-12-16 → 2027-06-02 (+168d) | 2026-12-19 → 2027-06-05 (+168d) |  | resources Skilled labor [32.24 h]; Unskilled Labor [128.83 h]; Electrician [64.47 h]; Equipment Opreator [32.24 h]; Boom Truck [32.24 h]; Cable, Copper 4x10mm2/ CU/XLPE/SWA/PVC + 1x10mm2 CU/PVC [133.1 m] → Skilled labor [32.24 h]; Unskilled Labor [128.8 h]; Electrician [64.47 h]; Equipment Opreator [32.24 h]; Boom Truck [32.24 h]; Cable, Copper 4x10mm2/ CU/XLPE/SWA/PVC + 1x10mm2 CU/PVC [133.1 m] |
| RHD4CZ2L011SL3400 | Testing of Street Lighting Cables for Street Lighting Network - (RD-L-11)-Z2-L011-SL | 2026-12-28 → 2027-06-14 (+168d) | 2026-12-29 → 2027-06-15 (+168d) |  |  |
| 1238 | **RHD4-02-002-L011-(SL)-Street Lighting Poles** | 2026-12-01 → 2027-05-13 (+163d) | 2027-01-03 → 2027-06-20 (+168d) |  |  |
| RHD4CZ2L011SL1100 | Excavation for RC Base for Lighting Poles for Street Lighting Network - (RD-L-11)-Z2-L011-SL | 2026-12-01 → 2027-05-13 (+163d) | 2026-12-02 → 2027-05-19 (+168d) |  |  |
| RHD4CZ2L011SL1200 | Installation for RC Base for Lighting Poles for Street Lighting Network - (RD-L-11)-Z2-L011-SL | 2026-12-03 → 2027-05-20 (+168d) | 2026-12-05 → 2027-05-22 (+168d) |  |  |
| RHD4CZ2L011SL1300 | Backfill for RC Base for Lighting Poles for Street Lighting Network - (RD-L-11)-Z2-L011-SL | 2026-12-06 → 2027-05-23 (+168d) | 2026-12-07 → 2027-05-24 (+168d) |  |  |
| RHD4CZ2L011SL1400 | Installation for Lighting Poles for Street Lighting Network - (RD-L-11)-Z2-L011-SL | 2026-12-30 → 2027-06-16 (+168d) | 2026-12-31 → 2027-06-17 (+168d) |  |  |
| RHD4CZ2L011SL1500 | Luminaire Installation for Lighting Poles for Street Lighting Network - (RD-L-11)-Z2-L011-SL | 2027-01-02 → 2027-06-19 (+168d) | 2027-01-03 → 2027-06-20 (+168d) |  | resources Unskilled Labor [20.36 h]; Electrician [10.13 h]; Equipment Opreator [2.07 h]; Boom Truck [4.03 h]; Street Lighting( LED) Luminaire of Output ?10898 lumen [14 Unit] → Unskilled Labor [20.36 h]; Electrician [10.13 h]; Equipment Opreator [2.07 h]; Boom Truck [4 h]; Street Lighting( LED) Luminaire of Output ?10898 lumen [14 Unit] |
| 1246 | **RHD4-02-002-Z2-L011-Telecommunications Network - TC** | 2026-09-13 → 2027-01-21 (+130d) | 2027-01-07 → 2027-06-24 (+168d) |  |  |
| 1247 | **RHD4-02-002-L011-(TC)-Telecommunications Ducts** | 2026-12-30 → 2027-06-16 (+168d) | 2027-01-07 → 2027-06-24 (+168d) |  |  |

| ID | Task | Start | Finish | Duration | Other |
| --- | --- | --- | --- | --- | --- |
| RHD4CZ2L011TC2100 | Excavation of HDPE Ducts for Telecom Network - (RD-L-11)-Z2-L011-TC | 2026-12-30 → 2027-06-16 (+168d) | 2026-12-31 → 2027-06-17 (+168d) |  | resources Skilled labor [19.17 h]; Unskilled Labor [19.17 h]; Equipment Opreator [38.33 h]; Excavator-Poclain [19.17 h]; Dump Truck [19.17 h]; (6*50mm) HDPE ducts -TC [52.85 m] → Skilled labor [19.2 h]; Unskilled Labor [19.2 h]; Equipment Opreator [38.33 h]; Excavator-Poclain [19.2 h]; Dump Truck [19.2 h]; (6*50mm) HDPE ducts -TC [52.85 m] |
| RHD4CZ2L011TC2200 | Installation of HDPE Ducts for Telecom Network - (RD-L-11)-Z2-L011-TC | 2027-01-02 → 2027-06-19 (+168d) | 2027-01-04 → 2027-06-21 (+168d) |  |  |
| RHD4CZ2L011TC2400 | Backfilling of HDPE Ducts for Telecom Network - (RD-L-11)-Z2-L011-TC | 2027-01-06 → 2027-06-23 (+168d) | 2027-01-07 → 2027-06-24 (+168d) |  | resources Skilled labor [19.17 h]; Unskilled Labor [19.17 h]; Equipment Opreator [7.62 h]; Excavator-Poclain [7.62 h]; (6*50mm) HDPE ducts -TC [39.64 m] → Skilled labor [19.2 h]; Unskilled Labor [19.2 h]; Equipment Opreator [7.62 h]; Excavator-Poclain [7.62 h]; (6*50mm) HDPE ducts -TC [39.64 m] |
| 1248 | **RHD4-02-002-L011-(TC)-Telecommunications Manholes** | 2027-01-02 → 2027-06-19 (+168d) | 2027-01-05 → 2027-06-22 (+168d) |  |  |
| RHD4CZ2L011TC5100 | Excavation for Manholes for Telecom Network - (RD-L-11)-Z2-L011-TC | 2027-01-02 → 2027-06-19 (+168d) | 2027-01-03 → 2027-06-20 (+168d) |  |  |
| RHD4CZ2L011TC5200 | Installation of Manholes for Telecom Network - (RD-L-11)-Z2-L011-TC | 2027-01-04 → 2027-06-21 (+168d) | 2027-01-05 → 2027-06-22 (+168d) |  |  |
| 1249 | **RHD4-02-002-L011-(TC)-Telecomminications Road Crossings** | 2026-09-13 → 2027-01-21 (+130d) | 2026-09-21 → 2027-02-04 (+136d) |  |  |
| RHD4CZ2L011TC3100 | Excavation for Road Crossings for Telecom Network - (RD-L-11)-Z2-L011-TC | 2026-09-13 → 2027-01-21 (+130d) | 2026-09-14 → 2027-01-23 (+131d) |  |  |
| RHD4CZ2L011TC3200 | Installation of Road Crossings for Telecom Network - (RD-L-11)-Z2-L011-TC | 2026-09-15 → 2027-01-30 (+137d) | 2026-09-16 → 2027-01-31 (+137d) |  |  |
| RHD4CZ2L011TC3300 | Pouring of Road Crossings for Telecom Network - (RD-L-11)-Z2-L011-TC | 2026-09-17 → 2027-02-01 (+137d) | 2026-09-19 → 2027-02-02 (+136d) |  |  |
| RHD4CZ2L011TC3400 | Backfilling of Road Crossings for Telecom Network - (RD-L-11)-Z2-L011-TC | 2026-09-20 → 2027-02-03 (+136d) | 2026-09-21 → 2027-02-04 (+136d) |  |  |
| 1250 | **RHD4-02-002-Z2-L011-Information and Communication Technologies - ICT** | 2026-09-13 → 2027-01-21 (+130d) | 2027-01-12 → 2027-06-29 (+168d) |  |  |
| 1251 | **RHD4-02-002-L011-(ICT)-Information and Communication Technologies Ducts** | 2027-01-02 → 2027-06-19 (+168d) | 2027-01-12 → 2027-06-29 (+168d) |  |  |
| RHD4CZ2L011ICT2100 | Excavation of HDPE Ducts for ICT Network - (RD-L-11)-Z2-L011-ICT | 2027-01-02 → 2027-06-19 (+168d) | 2027-01-04 → 2027-06-21 (+168d) |  |  |
| RHD4CZ2L011ICT2200 | Installation of HDPE Ducts for ICT Network - (RD-L-11)-Z2-L011-ICT | 2027-01-05 → 2027-06-22 (+168d) | 2027-01-09 → 2027-06-26 (+168d) |  |  |
| RHD4CZ2L011ICT2400 | Backfilling of HDPE Ducts for ICT Network - (RD-L-11)-Z2-L011-ICT | 2027-01-10 → 2027-06-27 (+168d) | 2027-01-12 → 2027-06-29 (+168d) |  |  |
| 1252 | **RHD4-02-002-L011-(ICT)-Information and Communication Technologies Manholes** | 2027-01-05 → 2027-06-22 (+168d) | 2027-01-09 → 2027-06-26 (+168d) |  |  |
| RHD4CZ2L011ICT5100 | Excavation for Manholes for ICT Network - (RD-L-11)-Z2-L011-ICT | 2027-01-05 → 2027-06-22 (+168d) | 2027-01-06 → 2027-06-23 (+168d) |  |  |
| RHD4CZ2L011ICT5200 | Installation of Manholes for ICT Network - (RD-L-11)-Z2-L011-ICT | 2027-01-07 → 2027-06-24 (+168d) | 2027-01-09 → 2027-06-26 (+168d) |  |  |
| 1253 | **RHD4-02-002-L011-(ICT)-Information and Communication Technologies Road Crossings** | 2026-09-13 → 2027-01-21 (+130d) | 2026-09-21 → 2027-02-27 (+159d) |  |  |
| RHD4CZ2L011ICT3100 | Excavation for Road Crossings for ICT Network - (RD-L-11)-Z2-L011-ICT | 2026-09-13 → 2027-01-21 (+130d) | 2026-09-14 → 2027-01-23 (+131d) |  |  |
| RHD4CZ2L011ICT3200 | Installation of Road Crossings for ICT Network - (RD-L-11)-Z2-L011-ICT | 2026-09-15 → 2027-02-20 (+158d) | 2026-09-16 → 2027-02-21 (+158d) |  |  |
| RHD4CZ2L011ICT3300 | Pouring of Road Crossings for ICT Network - (RD-L-11)-Z2-L011-ICT | 2026-09-17 → 2027-02-23 (+159d) | 2026-09-19 → 2027-02-24 (+158d) |  |  |
| RHD4CZ2L011ICT3400 | Backfilling of Road Crossings for ICT Network - (RD-L-11)-Z2-L011-ICT | 2026-09-20 → 2027-02-25 (+158d) | 2026-09-21 → 2027-02-27 (+159d) |  |  |
| 704 | **RHD4-02-002-Z2-C082** | 2026-08-23 → 2026-12-31 (+130d) | 2027-09-11 → 2028-03-28 (+199d) |  |  |
| 567 | **RHD4-02-002-Z2-C082-Sewage Network - SW** | 2026-10-25 → 2027-03-04 (+130d) | 2026-11-11 → 2027-03-25 (+134d) |  |  |
| 577 | **RHD4-02-002-C082-(SW)-MH Works - 1200 mm diameter** | 2026-10-25 → 2027-03-04 (+130d) | 2026-11-04 → 2027-03-18 (+134d) |  |  |
| RHD4CZ2C082SW3100 | Excavation and PC Blinding works for MH 1200 mm - (RD-C-8 /2)-Z2-C082-SW | 2026-10-25 → 2027-03-04 (+130d) | 2026-10-26 → 2027-03-06 (+131d) |  |  |
| RHD4CZ2C082SW3200 | Installation of Base for MH 1200 mm - (RD-C-8 /2)-Z2-C082-SW | 2026-10-27 → 2027-03-07 (+131d) | 2026-10-28 → 2027-03-08 (+131d) |  |  |
| RHD4CZ2C082SW3300 | MH Ring and C.Slab works and Backfilling works for MH 1200 mm - (RD-C-8 /2)-Z2-C082-SW | 2026-10-29 → 2027-03-13 (+135d) | 2026-10-31 → 2027-03-14 (+134d) |  |  |
| RHD4CZ2C082SW3400 | Steel Cover for MH 1200 mm - (RD-C-8 /2)-Z2-C082-SW | 2026-11-01 → 2027-03-15 (+134d) | 2026-11-02 → 2027-03-16 (+134d) |  |  |
| RHD4CZ2C082SW3500 | Finishing, Benching, Testing works for MH 1200 mm - (RD-C-8 /2)-Z2-C082-SW | 2026-11-03 → 2027-03-17 (+134d) | 2026-11-04 → 2027-03-18 (+134d) |  |  |
| 573 | **RHD4-02-002-C082-(SW)-UPVC Pipes - 200 mm diameter** | 2026-11-01 → 2027-03-15 (+134d) | 2026-11-11 → 2027-03-25 (+134d) |  |  |
| RHD4CZ2C082SW2100 | Excavation works for UPVC Pipe Line 200 mm - (RD-C-8 /2)-Z2-C082-SW | 2026-11-01 → 2027-03-15 (+134d) | 2026-11-02 → 2027-03-16 (+134d) |  |  |
| RHD4CZ2C082SW2200 | Bedding works for UPVC Pipe Line 200 mm - (RD-C-8 /2)-Z2-C082-SW | 2026-11-03 → 2027-03-17 (+134d) | 2026-11-04 → 2027-03-18 (+134d) |  |  |
| RHD4CZ2C082SW2300 | Installing for UPVC Pipe Line 200 mm - (RD-C-8 /2)-Z2-C082-SW | 2026-11-05 → 2027-03-20 (+135d) | 2026-11-07 → 2027-03-21 (+134d) |  |  |
| RHD4CZ2C082SW2400 | Primary Test for UPVC Pipe Line 200 mm - (RD-C-8 /2)-Z2-C082-SW | 2026-11-08 → 2027-03-22 (+134d) | 2026-11-09 → 2027-03-23 (+134d) |  |  |
| RHD4CZ2C082SW2500 | Backfilling and warning tape works for UPVC Pipe Line 200 mm - (RD-C-8 /2)-Z2-C082-SW | 2026-11-10 → 2027-03-24 (+134d) | 2026-11-11 → 2027-03-25 (+134d) |  |  |
| 883 | **RHD4-02-002-Z2-C082-Road Works - RD** | 2026-09-08 → 2027-01-17 (+131d) | 2027-09-11 → 2028-03-28 (+199d) |  |  |
| 884 | **RHD4-02-002-C082-(RD)-Subgrade** | 2026-09-08 → 2027-01-17 (+131d) | 2026-09-17 → 2027-01-27 (+132d) |  |  |
| RHD4CZ2C082RD1100 | Supply, lay and compaction subgrade compacted thickness 300 mm for Roads - (RD-C-8 /2)-Z2-C082-RD | 2026-09-08 → 2027-01-17 (+131d) | 2026-09-17 → 2027-01-27 (+132d) | 9d → 10d |  |
| 885 | **RHD4-02-002-C082-(RD)-Aggregate Base Course** | 2026-09-19 → 2027-01-28 (+131d) | 2026-09-27 → 2027-02-04 (+130d) |  |  |
| RHD4CZ2C082RD2100 | Supply, lay and compaction Aggregate base course compacted thickness 300 mmfor Roads - (RD-C-8 /2)-Z2-C082-RD | 2026-09-19 → 2027-01-28 (+131d) | 2026-09-27 → 2027-02-04 (+130d) |  | resources Skilled labor [36.48 h]; Unskilled Labor [72.97 h]; Equipment Opreator [462.08 h]; Water Truck [24.07 h]; Roller compactor [72.97 h]; Grader [72.97 h]; Dump Truck [291.97 h]; Aggregate Base Courses [2976.67 m3] → Skilled labor [36.48 h]; Unskilled Labor [72.97 h]; Equipment Opreator [462.08 h]; Water Truck [24.07 h]; Roller compactor [72.97 h]; Grader [72.97 h]; Dump Truck [292 h]; Aggregate Base Courses [2976.67 m3] |
| 886 | **RHD4-02-002-C082-(RD)-Bituminous base course Two Layers, including (MC1)&(RC2)** | 2026-09-28 → 2027-02-06 (+131d) | 2027-02-28 → 2027-07-15 (+137d) |  |  |
| RHD4CZ2C082RD3100 | Supply, lay and Asphaltic base course including Prime Coat (MC1) for 1st Layer - (RD-C-8 /2)-Z2-C082-RD | 2026-09-28 → 2027-02-06 (+131d) | 2026-09-30 → 2027-02-08 (+131d) |  | resources Skilled labor [28.97 h]; Unskilled Labor [173.92 h]; Equipment Opreator [434.74 h]; Bobcat [28.97 h]; Roller compactor [28.97 h]; Asphalt Paver [28.97 h]; Rubber Compactor [57.94 h]; MC1/RC2 Sprinkler [28.97 h]; Dump Truck [260.82 h]; Bituminous base course (Grading I - Class A), including Prime coat (MC1) & tack coate (RC2) [1060.3 m3] → Skilled labor [28.97 h]; Unskilled Labor [173.92 h]; Equipment Opreator [434.74 h]; Bobcat [28.97 h]; Roller compactor [28.97 h]; Asphalt Paver [28.97 h]; Rubber Compactor [57.94 h]; MC1/RC2 Sprinkler [28.97 h]; Dump Truck [260.8 h]; Bituminous base course (Grading I - Class A), including Prime coat (MC1) & tack coate (RC2) [1060.3 m3] |
| RHD4CZ2C082RD3200 | Supply, lay and Asphaltic base course including Tack Coat (RC2) for 2nd Layer - (RD-C-8 /2)-Z2-C082-RD | 2027-02-25 → 2027-07-13 (+138d) | 2027-02-28 → 2027-07-15 (+137d) |  | resources Skilled labor [28.97 h]; Unskilled Labor [173.92 h]; Equipment Opreator [434.74 h]; Bobcat [28.97 h]; Roller compactor [28.97 h]; Asphalt Paver [28.97 h]; Rubber Compactor [57.94 h]; MC1/RC2 Sprinkler [28.97 h]; Dump Truck [260.82 h]; Bituminous base course (Grading I - Class A), including Prime coat (MC1) & tack coate (RC2) [1060.3 m3] → Skilled labor [28.97 h]; Unskilled Labor [173.92 h]; Equipment Opreator [434.74 h]; Bobcat [28.97 h]; Roller compactor [28.97 h]; Asphalt Paver [28.97 h]; Rubber Compactor [57.94 h]; MC1/RC2 Sprinkler [28.97 h]; Dump Truck [260.8 h]; Bituminous base course (Grading I - Class A), including Prime coat (MC1) & tack coate (RC2) [1060.3 m3] |
| 888 | **RHD4-02-002-C082-(RD)-Precast Concrete Curb** | 2027-03-01 → 2027-07-17 (+138d) | 2027-03-07 → 2027-07-22 (+137d) |  |  |
| RHD4CZ2C082RD5100 | Supply and installation Precast Concrete Kerb for Roads - (RD-C-8 /2)-Z2-C082-RD | 2027-03-01 → 2027-07-17 (+138d) | 2027-03-07 → 2027-07-22 (+137d) |  | resources Mason [164.01 h]; Skilled labor [54.67 h]; Unskilled Labor [164.01 h]; Equipment Opreator [109.34 h]; Bobcat [54.67 h]; Concrete Mixer Truck [54.67 h]; Precast Concrete Curbstone, type K1 [2259.37 m] → Mason [164 h]; Skilled labor [54.67 h]; Unskilled Labor [164 h]; Equipment Opreator [109.34 h]; Bobcat [54.67 h]; Concrete Mixer Truck [54.67 h]; Precast Concrete Curbstone, type K1 [2259.37 m] |
| 891 | **RHD4-02-002-C082-(RD)-Traffic Signage** | 2027-03-08 → 2027-07-24 (+138d) | 2027-03-17 → 2027-07-29 (+134d) |  |  |
| RHD4CZ2C082RD8100 | Installation of Traffic Signage for Road Network - (RD-C-8 /2)-Z2-C082-RD | 2027-03-08 → 2027-07-24 (+138d) | 2027-03-17 → 2027-07-29 (+134d) |  |  |
| 887 | **RHD4-02-002-C082-(RD)-Bituminous concrete wearing course including tack coat (RC2)** | 2027-09-01 → 2028-03-19 (+200d) | 2027-09-02 → 2028-03-20 (+200d) |  |  |
| RHD4CZ2C082RD4100 | Supply, lay and compaction Asphaltic wearing course including tack Coat (RC2)for Road Network - (RD-C-8 /2)-Z2-C082-RD | 2027-09-01 → 2028-03-19 (+200d) | 2027-09-02 → 2028-03-20 (+200d) |  | resources Skilled labor [14.92 h]; Unskilled Labor [89.63 h]; Equipment Opreator [223.91 h]; Bobcat [14.92 h]; Roller compactor [14.92 h]; Asphalt Paver [14.92 h]; Rubber Compactor [29.84 h]; MC1/RC2 Sprinkler [14.92 h]; Dump Truck [134.39 h]; Bituminous concrete wearing course, (Grading I - Class A), including tack coat (RC2) [712.07 m3] → Skilled labor [14.92 h]; Unskilled Labor [89.6 h]; Equipment Opreator [223.91 h]; Bobcat [14.92 h]; Roller compactor [14.92 h]; Asphalt Paver [14.92 h]; Rubber Compactor [29.84 h]; MC1/RC2 Sprinkler [14.92 h]; Dump Truck [134.4 h]; Bituminous concrete wearing course, (Grading I - Class A), including tack coat (RC2) [712.07 m3] |
| 890 | **RHD4-02-002-C082-(RD)-Pavement Marking** | 2027-09-04 → 2028-03-21 (+199d) | 2027-09-11 → 2028-03-28 (+199d) |  |  |
| RHD4CZ2C082RD7100 | Pavement Markings for Road Network - (RD-C-8 /2)-Z2-C082-RD | 2027-09-04 → 2028-03-21 (+199d) | 2027-09-11 → 2028-03-28 (+199d) |  | resources Skilled labor [71.22 h]; Unskilled Labor [142.45 h]; Equipment Opreator [71.22 h]; Road Marking Machine [71.22 h]; Retroreflective Thermoplastic White Traffic Markings [349.33 m2]; Retroreflective Thermoplastic Yellow, Traffic Markings [304.94 m2]; Retroreflective raised pavement markers (cat eyes) [1019 nr]; Ceramic raised pavement markers [3 nr] → Skilled labor [71.2 h]; Unskilled Labor [142.45 h]; Equipment Opreator [71.2 h]; Road Marking Machine [71.2 h]; Retroreflective Thermoplastic White Traffic Markings [349.33 m2]; Retroreflective Thermoplastic Yellow, Traffic Markings [304.94 m2]; Retroreflective raised pavement markers (cat eyes) [1019 nr]; Ceramic raised pavement markers [3 nr] |
| 708 | **RHD4-02-002-Z2-C082-Storm Network - ST** | 2026-08-23 → 2026-12-31 (+130d) | 2026-11-04 → 2027-03-18 (+134d) |  |  |
| 6213 | **RHD4-02-002-C082-(ST)-MH Works - 2000 mm diameter** | 2026-09-01 → 2027-01-10 (+131d) | 2026-09-12 → 2027-01-20 (+130d) |  |  |
| RHD4CZ2C082ST3102 | Excavation and PC Blinding works for MH 2000 mm - (RD-C-8 /2)-Z2-C082-ST | 2026-09-01 → 2027-01-10 (+131d) | 2026-09-02 → 2027-01-11 (+131d) |  | resources Skilled labor [7.3 h]; Unskilled Labor [7.3 h]; Equipment Opreator [11.65 h]; Excavator-Poclain [7.3 h]; Water Truck [0.76 h]; Dump Truck [3.59 h]; MH (2000mm Diameter) - ST - depth 2.51 - 3.5m [0.5 nr] → Skilled labor [7.3 h]; Unskilled Labor [7.3 h]; Equipment Opreator [11.65 h]; Excavator-Poclain [7.3 h]; Water Truck [0.8 h]; Dump Truck [3.59 h]; MH (2000mm Diameter) - ST - depth 2.51 - 3.5m [0.5 nr] |
| RHD4CZ2C082ST3202 | Installation of Base for MH 2000 mm - (RD-C-8 /2)-Z2-C082-ST | 2026-09-03 → 2027-01-12 (+131d) | 2026-09-05 → 2027-01-13 (+130d) |  |  |
| RHD4CZ2C082ST3302 | MH Ring and C.Slab works and Backfilling works for MH 2000 mm - (RD-C-8 /2)-Z2-C082-ST | 2026-09-06 → 2027-01-14 (+130d) | 2026-09-07 → 2027-01-16 (+131d) |  |  |
| RHD4CZ2C082ST3402 | Steel Cover for MH 2000 mm - (RD-C-8 /2)-Z2-C082-ST | 2026-09-08 → 2027-01-17 (+131d) | 2026-09-09 → 2027-01-18 (+131d) |  |  |
| RHD4CZ2C082ST3502 | Finishing, Benching, Testing works for MH 2000 mm - (RD-C-8 /2)-Z2-C082-ST | 2026-09-10 → 2027-01-19 (+131d) | 2026-09-12 → 2027-01-20 (+130d) |  |  |
| 525 | **RHD4-02-002-C082-(ST)-GRP Pipes - 1000 mm diameter** | 2026-08-23 → 2026-12-31 (+130d) | 2026-09-02 → 2027-01-11 (+131d) |  |  |
| RHD4CZ2C082ST1106 | Excavation works for GRP Pipe Line 1000 mm - (RD-C-8 /2)-Z2-C082-ST | 2026-08-23 → 2026-12-31 (+130d) | 2026-08-24 → 2027-01-02 (+131d) |  |  |
| RHD4CZ2C082ST1206 | Bedding works for GRP Pipe Line 1000 mm - (RD-C-8 /2)-Z2-C082-ST | 2026-08-25 → 2027-01-03 (+131d) | 2026-08-26 → 2027-01-04 (+131d) |  |  |
| RHD4CZ2C082ST1306 | Installing for GRP Pipe Line 1000 mm - (RD-C-8 /2)-Z2-C082-ST | 2026-08-27 → 2027-01-05 (+131d) | 2026-08-29 → 2027-01-06 (+130d) |  |  |
| RHD4CZ2C082ST1406 | Primary Test for GRP Pipe Line 1000 mm - (RD-C-8 /2)-Z2-C082-ST | 2026-08-30 → 2027-01-07 (+130d) | 2026-08-31 → 2027-01-09 (+131d) |  |  |
| RHD4CZ2C082ST1506 | Backfilling and warning tape works for GRP Pipe Line 1000 mm - (RD-C-8 /2)-Z2-C082-ST | 2026-09-01 → 2027-01-10 (+131d) | 2026-09-02 → 2027-01-11 (+131d) |  |  |
| 725 | **RHD4-02-002-C082-(ST)-MH Works - 1200 mm diameter** | 2026-08-25 → 2027-01-03 (+131d) | 2026-11-02 → 2027-03-16 (+134d) |  |  |
| RHD4CZ2C082ST3100 | Excavation and PC Blinding works for MH 1200 mm - (RD-C-8 /2)-Z2-C082-ST | 2026-08-25 → 2027-01-03 (+131d) | 2026-08-29 → 2027-01-06 (+130d) |  |  |
| RHD4CZ2C082ST3200 | Installation of Base for MH 1200 mm - (RD-C-8 /2)-Z2-C082-ST | 2026-08-30 → 2027-01-07 (+130d) | 2026-09-02 → 2027-01-11 (+131d) |  |  |

| ID | Task | Start | Finish | Duration | Other |
| --- | --- | --- | --- | --- | --- |
| RHD4CZ2C082ST3300 | MH Ring and C.Slab works and Backfilling works for MH 1200 mm - (RD-C-8 /2)-Z2-C082-ST | 2026-09-03 → 2027-01-12 (+131d) | 2026-09-07 → 2027-01-16 (+131d) |  |  |
| RHD4CZ2C082ST3400 | Steel Cover for MH 1200 mm - (RD-C-8 /2)-Z2-C082-ST | 2026-10-25 → 2027-03-04 (+130d) | 2026-10-28 → 2027-03-08 (+131d) |  |  |
| RHD4CZ2C082ST3500 | Finishing, Benching, Testing works for MH 1200 mm - (RD-C-8 /2)-Z2-C082-ST | 2026-10-29 → 2027-03-13 (+135d) | 2026-11-02 → 2027-03-16 (+134d) |  |  |
| 726 | **RHD4-02-002-C082-(ST)-MH Works - 1500 mm diameter** | 2026-08-30 → 2027-01-07 (+130d) | 2026-11-04 → 2027-03-18 (+134d) |  |  |
| RHD4CZ2C082ST3101 | Excavation and PC Blinding works for MH 1500 mm - (RD-C-8 /2)-Z2-C082-ST | 2026-08-30 → 2027-01-07 (+130d) | 2026-08-31 → 2027-01-09 (+131d) |  |  |
| RHD4CZ2C082ST3201 | Installation of Base for MH 1500 mm - (RD-C-8 /2)-Z2-C082-ST | 2026-09-03 → 2027-01-12 (+131d) | 2026-09-05 → 2027-01-13 (+130d) |  |  |
| RHD4CZ2C082ST3301 | MH Ring and C.Slab works and Backfilling works for MH 1500 mm - (RD-C-8 /2)-Z2-C082-ST | 2026-09-08 → 2027-01-17 (+131d) | 2026-09-09 → 2027-01-18 (+131d) |  |  |
| RHD4CZ2C082ST3401 | Steel Cover for MH 1500 mm - (RD-C-8 /2)-Z2-C082-ST | 2026-10-29 → 2027-03-13 (+135d) | 2026-10-31 → 2027-03-14 (+134d) |  |  |
| RHD4CZ2C082ST3501 | Finishing, Benching, Testing works for MH 1500 mm - (RD-C-8 /2)-Z2-C082-ST | 2026-11-03 → 2027-03-17 (+134d) | 2026-11-04 → 2027-03-18 (+134d) |  |  |
| 712 | **RHD4-02-002-C082-(ST)-GRP Pipes - 700 mm diameter** | 2026-08-25 → 2027-01-03 (+131d) | 2026-09-05 → 2027-01-13 (+130d) |  |  |
| RHD4CZ2C082ST1103 | Excavation works for GRP Pipe Line 700 mm - (RD-C-8 /2)-Z2-C082-ST | 2026-08-25 → 2027-01-03 (+131d) | 2026-08-26 → 2027-01-04 (+131d) |  |  |
| RHD4CZ2C082ST1203 | Bedding works for GRP Pipe Line 700 mm - (RD-C-8 /2)-Z2-C082-ST | 2026-08-27 → 2027-01-05 (+131d) | 2026-08-29 → 2027-01-06 (+130d) |  |  |
| RHD4CZ2C082ST1303 | Installing for GRP Pipe Line 700 mm - (RD-C-8 /2)-Z2-C082-ST | 2026-08-30 → 2027-01-07 (+130d) | 2026-08-31 → 2027-01-09 (+131d) |  |  |
| RHD4CZ2C082ST1403 | Primary Test for GRP Pipe Line 700 mm - (RD-C-8 /2)-Z2-C082-ST | 2026-09-01 → 2027-01-10 (+131d) | 2026-09-02 → 2027-01-11 (+131d) |  |  |
| RHD4CZ2C082ST1503 | Backfilling and warning tape works for GRP Pipe Line 700 mm - (RD-C-8 /2)-Z2-C082-ST | 2026-09-03 → 2027-01-12 (+131d) | 2026-09-05 → 2027-01-13 (+130d) |  |  |
| 711 | **RHD4-02-002-C082-(ST)-GRP Pipes - 600 mm diameter** | 2026-09-06 → 2027-01-14 (+130d) | 2026-09-16 → 2027-01-25 (+131d) |  |  |
| RHD4CZ2C082ST1102 | Excavation works for GRP Pipe Line 600 mm - (RD-C-8 /2)-Z2-C082-ST | 2026-09-06 → 2027-01-14 (+130d) | 2026-09-07 → 2027-01-16 (+131d) |  |  |
| RHD4CZ2C082ST1202 | Bedding works for GRP Pipe Line 600 mm - (RD-C-8 /2)-Z2-C082-ST | 2026-09-08 → 2027-01-17 (+131d) | 2026-09-09 → 2027-01-18 (+131d) |  |  |
| RHD4CZ2C082ST1302 | Installing for GRP Pipe Line 600 mm - (RD-C-8 /2)-Z2-C082-ST | 2026-09-10 → 2027-01-19 (+131d) | 2026-09-12 → 2027-01-20 (+130d) |  |  |
| RHD4CZ2C082ST1402 | Primary Test for GRP Pipe Line 600 mm - (RD-C-8 /2)-Z2-C082-ST | 2026-09-13 → 2027-01-21 (+130d) | 2026-09-14 → 2027-01-23 (+131d) |  |  |
| RHD4CZ2C082ST1502 | Backfilling and warning tape works for GRP Pipe Line 600 mm - (RD-C-8 /2)-Z2-C082-ST | 2026-09-15 → 2027-01-24 (+131d) | 2026-09-16 → 2027-01-25 (+131d) |  |  |
| 710 | **RHD4-02-002-C082-(ST)-GRP Pipes - 500 mm diameter** | 2026-09-17 → 2027-01-26 (+131d) | 2026-09-29 → 2027-02-06 (+130d) |  |  |
| RHD4CZ2C082ST1101 | Excavation works for GRP Pipe Line 500 mm - (RD-C-8 /2)-Z2-C082-ST | 2026-09-17 → 2027-01-26 (+131d) | 2026-09-19 → 2027-01-27 (+130d) |  |  |
| RHD4CZ2C082ST1201 | Bedding works for GRP Pipe Line 500 mm - (RD-C-8 /2)-Z2-C082-ST | 2026-09-20 → 2027-01-28 (+130d) | 2026-09-21 → 2027-01-30 (+131d) |  |  |
| RHD4CZ2C082ST1301 | Installing for GRP Pipe Line 500 mm - (RD-C-8 /2)-Z2-C082-ST | 2026-09-22 → 2027-01-31 (+131d) | 2026-09-24 → 2027-02-01 (+130d) |  |  |
| RHD4CZ2C082ST1401 | Primary Test for GRP Pipe Line 500 mm - (RD-C-8 /2)-Z2-C082-ST | 2026-09-26 → 2027-02-02 (+129d) | 2026-09-27 → 2027-02-03 (+129d) |  |  |
| RHD4CZ2C082ST1501 | Backfilling and warning tape works for GRP Pipe Line 500 mm - (RD-C-8 /2)-Z2-C082-ST | 2026-09-28 → 2027-02-04 (+129d) | 2026-09-29 → 2027-02-06 (+130d) |  |  |
| 709 | **RHD4-02-002-C082-(ST)-GRP Pipes - 400 mm diameter** | 2026-09-30 → 2027-02-07 (+130d) | 2026-10-11 → 2027-02-17 (+129d) |  |  |
| RHD4CZ2C082ST1100 | Excavation works for GRP Pipe Line 400 mm - (RD-C-8 /2)-Z2-C082-ST | 2026-09-30 → 2027-02-07 (+130d) | 2026-10-01 → 2027-02-08 (+130d) |  |  |
| RHD4CZ2C082ST1200 | Bedding works for GRP Pipe Line 400 mm - (RD-C-8 /2)-Z2-C082-ST | 2026-10-03 → 2027-02-09 (+129d) | 2026-10-04 → 2027-02-10 (+129d) |  |  |
| RHD4CZ2C082ST1300 | Installing for GRP Pipe Line 400 mm - (RD-C-8 /2)-Z2-C082-ST | 2026-10-05 → 2027-02-11 (+129d) | 2026-10-06 → 2027-02-13 (+130d) |  |  |
| RHD4CZ2C082ST1400 | Primary Test for GRP Pipe Line 400 mm - (RD-C-8 /2)-Z2-C082-ST | 2026-10-07 → 2027-02-14 (+130d) | 2026-10-08 → 2027-02-15 (+130d) |  |  |
| RHD4CZ2C082ST1500 | Backfilling and warning tape works for GRP Pipe Line 400 mm - (RD-C-8 /2)-Z2-C082-ST | 2026-10-10 → 2027-02-16 (+129d) | 2026-10-11 → 2027-02-17 (+129d) |  |  |
| 723 | **RHD4-02-002-C082-(ST)-UPVC Pipes - 300 mm diameter** | 2026-10-12 → 2027-02-18 (+129d) | 2026-10-24 → 2027-03-03 (+130d) |  |  |
| RHD4CZ2C082ST2100 | Excavation works for UPVC Pipe Line 300 mm - (RD-C-8 /2)-Z2-C082-ST | 2026-10-12 → 2027-02-18 (+129d) | 2026-10-13 → 2027-02-20 (+130d) |  | resources Skilled labor [20.36 h]; Unskilled Labor [20.36 h]; Equipment Opreator [24.5 h]; Excavator-Poclain [20.36 h]; Dump Truck [4.03 h]; UPVC (300mm Diameter) - ST - Depth less than 1.5 [44.79 m]; UPVC (300mm Diameter) - ST - Depth: 1.51m - 2.5m → Skilled labor [20.36 h]; Unskilled Labor [20.36 h]; Equipment Opreator [24.5 h]; Excavator-Poclain [20.36 h]; Dump Truck [4 h]; UPVC (300mm Diameter) - ST - Depth less than 1.5 [44.79 m]; UPVC (300mm Diameter) - ST - Depth: 1.51m - 2.5m |
| RHD4CZ2C082ST2200 | Bedding works for UPVC Pipe Line 300 mm - (RD-C-8 /2)-Z2-C082-ST | 2026-10-14 → 2027-02-21 (+130d) | 2026-10-15 → 2027-02-23 (+131d) |  |  |
| RHD4CZ2C082ST2300 | Installing for UPVC Pipe Line 300 mm - (RD-C-8 /2)-Z2-C082-ST | 2026-10-17 → 2027-02-24 (+130d) | 2026-10-18 → 2027-02-25 (+130d) |  |  |
| RHD4CZ2C082ST2400 | Primary Test for UPVC Pipe Line 300 mm - (RD-C-8 /2)-Z2-C082-ST | 2026-10-19 → 2027-02-27 (+131d) | 2026-10-20 → 2027-02-28 (+131d) |  |  |
| RHD4CZ2C082ST2500 | Backfilling and warning tape works for UPVC Pipe Line 300 mm - (RD-C-8 /2)-Z2-C082-ST | 2026-10-21 → 2027-03-01 (+131d) | 2026-10-24 → 2027-03-03 (+130d) |  | resources Skilled labor [24.39 h]; Unskilled Labor [48.79 h]; Equipment Opreator [48.79 h]; Excavator-Poclain [24.39 h]; Dump Truck [24.39 h]; UPVC (300mm Diameter) - ST - Depth less than 1.5 [89.57 m]; UPVC (300mm Diameter) - ST - Depth: 1.51m - 2.5m → Skilled labor [24.39 h]; Unskilled Labor [48.8 h]; Equipment Opreator [48.8 h]; Excavator-Poclain [24.39 h]; Dump Truck [24.39 h]; UPVC (300mm Diameter) - ST - Depth less than 1.5 [89.57 m]; UPVC (300mm Diameter) - ST - Depth: 1.51m - 2.5m |
| 731 | **RHD4-02-002-C082-(ST)-Concrete Encasement** | 2026-10-17 → 2027-02-24 (+130d) | 2026-10-18 → 2027-02-25 (+130d) |  |  |
| RHD4CZ2C082ST6100 | Pipe Encasement for Storm Pipelines - (RD-C-8 /2)-Z2-C082-ST | 2026-10-17 → 2027-02-24 (+130d) | 2026-10-18 → 2027-02-25 (+130d) |  |  |
| 732 | **RHD4-02-002-Z2-C082-Catch Basin - ST** | 2026-08-25 → 2027-01-03 (+131d) | 2026-09-21 → 2027-01-30 (+131d) |  |  |
| 733 | **RHD4-02-002-C082-(ST)-Single Catch Basin Works** | 2026-08-25 → 2027-01-03 (+131d) | 2026-09-13 → 2027-01-21 (+130d) |  |  |
| RHD4CZ2C082ST7100 | Excavation works for Single Catch Basin - (RD-C-8 /2)-Z2-C082-ST | 2026-08-25 → 2027-01-03 (+131d) | 2026-08-27 → 2027-01-05 (+131d) |  | resources Skilled labor [23.96 h]; Unskilled Labor [47.92 h]; Equipment Opreator [35.94 h]; Excavator-Poclain [23.96 h]; Dump Truck [11.98 h]; Single Catch basin - ST [5.5 nr] → Skilled labor [23.96 h]; Unskilled Labor [47.92 h]; Equipment Opreator [35.94 h]; Excavator-Poclain [23.96 h]; Dump Truck [12 h]; Single Catch basin - ST [5.5 nr] |
| RHD4CZ2C082ST7200 | PC Blinding, Installation and Pipe connection for Single Catch Basin - (RD-C-8 /2)-Z2-C082-ST | 2026-08-29 → 2027-01-06 (+130d) | 2026-08-31 → 2027-01-09 (+131d) |  | resources Skilled labor [23.96 h]; Unskilled Labor [47.92 h]; Plumber [11.98 h]; Equipment Opreator [4.79 h]; Boom Truck [4.79 h]; Single Catch basin - ST [4.4 nr] → Skilled labor [23.96 h]; Unskilled Labor [47.92 h]; Plumber [12 h]; Equipment Opreator [4.8 h]; Boom Truck [4.8 h]; Single Catch basin - ST [4.4 nr] |
| RHD4CZ2C082ST7300 | Rings & C.Slab & Final Backfill for Single Catch Basin - (RD-C-8 /2)-Z2-C082-ST | 2026-09-01 → 2027-01-10 (+131d) | 2026-09-03 → 2027-01-12 (+131d) |  |  |
| RHD4CZ2C082ST7400 | Steel Cover for Single Catch Basin - (RD-C-8 /2)-Z2-C082-ST | 2026-09-05 → 2027-01-13 (+130d) | 2026-09-07 → 2027-01-16 (+131d) |  | resources Skilled labor [23.96 h]; Unskilled Labor [23.96 h]; Equipment Opreator [4.79 h]; Boom Truck [4.79 h]; Single Catch basin - ST [1.1 nr] → Skilled labor [23.96 h]; Unskilled Labor [23.96 h]; Equipment Opreator [4.8 h]; Boom Truck [4.8 h]; Single Catch basin - ST [1.1 nr] |
| RHD4CZ2C082ST7500 | Finishing and Insulation works for Single Catch Basin - (RD-C-8 /2)-Z2-C082-ST | 2026-09-08 → 2027-01-17 (+131d) | 2026-09-13 → 2027-01-21 (+130d) |  | resources Skilled labor [47.92 h]; Unskilled Labor [95.84 h]; Equipment Opreator [9.58 h]; Boom Truck [9.58 h]; Single Catch basin - ST [3.3 nr] → Skilled labor [47.92 h]; Unskilled Labor [95.84 h]; Equipment Opreator [9.6 h]; Boom Truck [9.6 h]; Single Catch basin - ST [3.3 nr] |
| 734 | **RHD4-02-002-C082-(ST)-Double Catch Basin Works** | 2026-09-10 → 2027-01-19 (+131d) | 2026-09-21 → 2027-01-30 (+131d) |  |  |
| RHD4CZ2C082ST8100 | Excavation works for Double Catch Basin - (RD-C-8 /2)-Z2-C082-ST | 2026-09-10 → 2027-01-19 (+131d) | 2026-09-12 → 2027-01-20 (+130d) |  |  |
| RHD4CZ2C082ST8200 | PC Blinding, Installation and Pipe connection for Double Catch Basin - (RD-C-8 /2)-Z2-C082-ST | 2026-09-13 → 2027-01-21 (+130d) | 2026-09-14 → 2027-01-23 (+131d) |  |  |
| RHD4CZ2C082ST8300 | Rings & C.Slab & Final Backfillfor Double Catch Basin - (RD-C-8 /2)-Z2-C082-ST | 2026-09-15 → 2027-01-24 (+131d) | 2026-09-16 → 2027-01-25 (+131d) |  |  |
| RHD4CZ2C082ST8400 | Steel Cover for Double Catch Basin - (RD-C-8 /2)-Z2-C082-ST | 2026-09-17 → 2027-01-26 (+131d) | 2026-09-19 → 2027-01-27 (+130d) |  |  |
| RHD4CZ2C082ST8500 | Finishing and Insulation works for Double Catch Basin - (RD-C-8 /2)-Z2-C082-ST | 2026-09-20 → 2027-01-28 (+130d) | 2026-09-21 → 2027-01-30 (+131d) |  |  |
| 705 | **RHD4-02-002-Z2-C082-Concrete Box Culvert - ST** | 2027-03-01 → 2027-07-21 (+142d) | 2027-07-10 → 2027-11-21 (+134d) |  |  |
| 706 | **RHD4-02-002-C082-(ST)-Concrete Box Culvert** | 2027-03-01 → 2027-07-21 (+142d) | 2027-07-10 → 2027-11-21 (+134d) |  |  |
| RHD4CZ2C082ST4100 | Excavation works for Box Culvert - (RD-C-8 /2)-Z2-C082-ST | 2027-03-01 → 2027-07-21 (+142d) | 2027-03-28 → 2027-08-14 (+139d) |  |  |
| RHD4CZ2C082ST4200 | PC works for Box Culvert - (RD-C-8 /2)-Z2-C082-ST | 2027-03-29 → 2027-08-15 (+139d) | 2027-04-05 → 2027-08-22 (+139d) |  |  |
| RHD4CZ2C082ST4400 | Raft works for Box Culvert - (RD-C-8 /2)-Z2-C082-ST | 2027-04-06 → 2027-08-23 (+139d) | 2027-04-27 → 2027-09-13 (+139d) |  | resources Carpenter [164.01 h]; Skilled labor [198.75 h]; Steel Fixer [34.74 h]; Equipment Opreator [334.88 h]; Boom Truck [6.97 h]; Concrete Mixer Truck [164.01 h]; Concrete Pump [164.01 h]; Supply and cast in place reinforced concrete for Box culverts - ST [1204.51 m3]; Supply, placing, and fixing of high tensile reinforcement steel for Box culverts - ST [255.36 Ton] → Carpenter [164 h]; Skilled labor [198.75 h]; Steel Fixer [34.74 h]; Equipment Opreator [334.88 h]; Boom Truck [6.97 h]; Concrete Mixer Truck [164 h]; Concrete Pump [164 h]; Supply and cast in place reinforced concrete for Box culverts - ST [1204.51 m3]; Supply, placing, and fixing of high tensile reinforcement steel for Box culverts - ST [255.36 Ton] |
| RHD4CZ2C082ST4500 | Wall and slab works for Box Culvert - (RD-C-8 /2)-Z2-C082-ST | 2027-04-28 → 2027-09-14 (+139d) | 2027-05-24 → 2027-10-06 (+135d) |  | resources Carpenter [164.01 h]; Skilled labor [198.75 h]; Steel Fixer [34.74 h]; Equipment Opreator [334.88 h]; Boom Truck [6.97 h]; Concrete Mixer Truck [164.01 h]; Concrete Pump [164.01 h]; Supply and cast in place reinforced concrete for Box culverts - ST [1505.63 m3]; Supply, placing, and fixing of high tensile reinforcement steel for Box culverts - ST [383.03 Ton] → Carpenter [164 h]; Skilled labor [198.75 h]; Steel Fixer [34.74 h]; Equipment Opreator [334.88 h]; Boom Truck [6.97 h]; Concrete Mixer Truck [164 h]; Concrete Pump [164 h]; Supply and cast in place reinforced concrete for Box culverts - ST [1505.63 m3]; Supply, placing, and fixing of high tensile reinforcement steel for Box culverts - ST [383.03 Ton] |
| RHD4CZ2C082ST4700 | Backfilling works for Box Culvert - (RD-C-8 /2)-Z2-C082-ST | 2027-06-02 → 2027-10-14 (+134d) | 2027-06-21 → 2027-11-02 (+134d) |  |  |
| RHD4CZ2C082ST4600 | Insulation and Testing for Box Culvert - (RD-C-8 /2)-Z2-C082-ST | 2027-06-22 → 2027-11-03 (+134d) | 2027-07-10 → 2027-11-21 (+134d) |  | resources Skilled labor [164.01 h]; Unskilled Labor [327.91 h]; Equipment Opreator [164.01 h]; Water Truck [164.01 h]; Supply and cast in place reinforced concrete for Box culverts - ST [301.13 m3] → Skilled labor [164 h]; Unskilled Labor [327.91 h]; Equipment Opreator [164 h]; Water Truck [164 h]; Supply and cast in place reinforced concrete for Box culverts - ST [301.13 m3] |
| 707 | **RHD4-02-002-C082-(ST)-Concrete Chambers** | 2027-05-25 → 2027-10-07 (+135d) | 2027-06-03 → 2027-10-16 (+135d) |  |  |
| RHD4CZ2C082ST5100 | Excavation and Bedding for Concrete Chambers - for Box Culvert - (RD-C-8 /2)-Z2-C082-ST | 2027-05-25 → 2027-10-07 (+135d) | 2027-05-27 → 2027-10-09 (+135d) | 3d → 2d |  |
| RHD4CZ2C082ST5200 | PC works for Concrete Chambers - for Box Culvert - (RD-C-8 /2)-Z2-C082-ST | 2027-05-29 → 2027-10-10 (+134d) | 2027-05-30 → 2027-10-11 (+134d) |  |  |
| RHD4CZ2C082ST5300 | Installation for Concrete Chambers - for Box Culvert - (RD-C-8 /2)-Z2-C082-ST | 2027-05-31 → 2027-10-12 (+134d) | 2027-06-01 → 2027-10-13 (+134d) |  |  |
| RHD4CZ2C082ST5400 | Backfilling works for Concrete Chambers - for Box Culvert - (RD-C-8 /2)-Z2-C082-ST | 2027-06-02 → 2027-10-14 (+134d) | 2027-06-03 → 2027-10-16 (+135d) |  |  |
| 794 | **RHD4-02-002-Z2-C082-Potable Network - PT** | 2026-11-12 → 2027-03-27 (+135d) | 2026-12-26 → 2027-05-09 (+134d) |  |  |
| 797 | **RHD4-02-002-C082-(PT)-HDPE Pipes - 200 mm diameter** | 2026-11-12 → 2027-03-27 (+135d) | 2026-12-21 → 2027-05-04 (+134d) |  |  |
| RHD4CZ2C082PT1102 | Excavation works for HDPE Pipline 200 mm - (RD-C-8 /2)-Z2-C082-PT | 2026-11-12 → 2027-03-27 (+135d) | 2026-11-17 → 2027-03-31 (+134d) |  |  |

| ID | Task | Start | Finish | Other |
| --- | --- | --- | --- | --- |
| RHD4CZ2C082PT1202 | Bedding works for HDPE Pipline 200 mm - (RD-C-8 /2)-Z2-C082-PT | 2026-11-18 → 2027-04-01 (+134d) | 2026-11-22 → 2027-04-05 (+134d) |  |
| RHD4CZ2C082PT1302 | Installing for HDPE Pipline 200 mm - (RD-C-8 /2)-Z2-C082-PT | 2026-11-23 → 2027-04-06 (+134d) | 2026-11-30 → 2027-04-13 (+134d) |  |
| RHD4CZ2C082PT1402 | Primary Test for HDPE Pipline 200 mm - (RD-C-8 /2)-Z2-C082-PT | 2026-12-12 → 2027-04-25 (+134d) | 2026-12-14 → 2027-04-27 (+134d) | resources Unskilled Labor [24.83 h]; Plumber [24.83 h]; Equipment Opreator [24.83 h]; Water Truck [24.83 h]; HDPE (200mm Diameter) - PT - Depth: less than 1.5m [210 m]; HDPE (200mm Diameter) - PT - Depth: more than 1.5m → Unskilled Labor [24.8 h]; Plumber [24.8 h]; Equipment Opreator [24.8 h]; Water Truck [24.8 h]; HDPE (200mm Diameter) - PT - Depth: less than 1.5m [210 m]; HDPE (200mm Diameter) - PT - Depth: more than 1.5m |
| RHD4CZ2C082PT1502 | Backfilling and warning tape works for HDPE Pipline 200 mm - (RD-C-8 /2)-Z2-C082-PT | 2026-12-15 → 2027-04-28 (+134d) | 2026-12-21 → 2027-05-04 (+134d) |  |
| 800 | **RHD4-02-002-C082-(PT)-Gate Valves (Direct Buried)** | 2026-11-29 → 2027-04-12 (+134d) | 2026-12-23 → 2027-05-06 (+134d) |  |
| RHD4CZ2C082PT3100 | Installation for Direct Buried Gate Valves - (RD-C-8 /2)-Z2-C082-PT | 2026-11-29 → 2027-04-12 (+134d) | 2026-11-30 → 2027-04-13 (+134d) |  |
| RHD4CZ2C082PT3200 | Stem and Service box for Direct Buried Gate Valves - (RD-C-8 /2)-Z2-C082-PT | 2026-12-22 → 2027-05-05 (+134d) | 2026-12-23 → 2027-05-06 (+134d) |  |
| 808 | **RHD4-02-002-C082-(PT)-Concrete Encasement** | 2026-11-23 → 2027-04-06 (+134d) | 2026-12-10 → 2027-04-24 (+135d) |  |
| RHD4CZ2C082PT5100 | Pipe Encasement for Potable Pipelines - (RD-C-8 /2)-Z2-C082-PT | 2026-11-23 → 2027-04-06 (+134d) | 2026-12-10 → 2027-04-24 (+135d) |  |
| 803 | **RHD4-02-002-C082-(PT)-Wash out Valve Chambers** | 2026-11-18 → 2027-04-01 (+134d) | 2026-12-26 → 2027-05-09 (+134d) |  |
| RHD4CZ2C082PT2101 | Excavation and Bedding for Wash out Valve Chambers for Potable Water Network - (RD-C-8 /2)-Z2-C082-PT | 2026-11-18 → 2027-04-01 (+134d) | 2026-11-19 → 2027-04-03 (+135d) |  |
| RHD4CZ2C082PT2201 | PC works for Wash out Valve Chambers for Potable Water Network - (RD-C-8 /2)-Z2-C082-PT | 2026-11-21 → 2027-04-04 (+134d) | 2026-11-22 → 2027-04-05 (+134d) |  |
| RHD4CZ2C082PT2301 | Installation for Wash out Valve Chambers for Potable Water Network - (RD-C-8 /2)-Z2-C082-PT | 2026-11-23 → 2027-04-06 (+134d) | 2026-11-24 → 2027-04-07 (+134d) |  |
| RHD4CZ2C082PT2401 | Backfilling works for Wash out Valve Chambers for Potable Water Network - (RD-C-8 /2)-Z2-C082-PT | 2026-12-24 → 2027-05-08 (+135d) | 2026-12-26 → 2027-05-09 (+134d) |  |
| 804 | **RHD4-02-002-C082-(PT)-Wash out Valves** | 2026-12-01 → 2027-04-14 (+134d) | 2026-12-05 → 2027-04-18 (+134d) |  |
| RHD4CZ2C082PT3102 | Installation for Wash out Valves for Potable Water Network - (RD-C-8 /2)-Z2-C082-PT | 2026-12-01 → 2027-04-14 (+134d) | 2026-12-02 → 2027-04-15 (+134d) |  |
| RHD4CZ2C082PT3202 | Stem and Service box for Wash out Valves for Potable Water Network - (RD-C-8 /2)-Z2-C082-PT | 2026-12-03 → 2027-04-17 (+135d) | 2026-12-05 → 2027-04-18 (+134d) |  |
| 805 | **RHD4-02-002-C082-(PT)-Air Valve Chambers** | 2026-11-18 → 2027-04-01 (+134d) | 2026-11-26 → 2027-04-10 (+135d) |  |
| RHD4CZ2C082PT2102 | Excavation and Bedding for Air Valve Chambers for Potable Water Network - (RD-C-8 /2)-Z2-C082-PT | 2026-11-18 → 2027-04-01 (+134d) | 2026-11-19 → 2027-04-03 (+135d) |  |
| RHD4CZ2C082PT2202 | PC works for Air Valve Chambers for Potable Water Network - (RD-C-8 /2)-Z2-C082-PT | 2026-11-21 → 2027-04-04 (+134d) | 2026-11-22 → 2027-04-05 (+134d) |  |
| RHD4CZ2C082PT2302 | Installation for Air Valve Chambers for Potable Water Network - (RD-C-8 /2)-Z2-C082-PT | 2026-11-23 → 2027-04-06 (+134d) | 2026-11-24 → 2027-04-07 (+134d) |  |
| RHD4CZ2C082PT2402 | Backfilling works for Air Valve Chambers for Potable Water Network - (RD-C-8 /2)-Z2-C082-PT | 2026-11-25 → 2027-04-08 (+134d) | 2026-11-26 → 2027-04-10 (+135d) |  |
| 806 | **RHD4-02-002-C082-(PT)-Air Valves** | 2026-11-25 → 2027-04-08 (+134d) | 2026-11-29 → 2027-04-12 (+134d) |  |
| RHD4CZ2C082PT3103 | Installation for Air Valves for Potable Water Network - (RD-C-8 /2)-Z2-C082-PT | 2026-11-25 → 2027-04-08 (+134d) | 2026-11-26 → 2027-04-10 (+135d) |  |
| RHD4CZ2C082PT3203 | Stem and Service box for Air Valves for Potable Water Network - (RD-C-8 /2)-Z2-C082-PT | 2026-11-28 → 2027-04-11 (+134d) | 2026-11-29 → 2027-04-12 (+134d) |  |
| 807 | **RHD4-02-002-C082-(PT)-Fire Hydrant** | 2026-12-01 → 2027-04-14 (+134d) | 2026-12-17 → 2027-05-01 (+135d) |  |
| RHD4CZ2C082PT4100 | Excavation and Bedding and Pipe Installation for Fire Hydrant - (RD-C-8 /2)-Z2-C082-PT | 2026-12-01 → 2027-04-14 (+134d) | 2026-12-05 → 2027-04-18 (+134d) |  |
| RHD4CZ2C082PT4200 | Valve Installation for Fire Hydrant - (RD-C-8 /2)-Z2-C082-PT | 2026-12-06 → 2027-04-19 (+134d) | 2026-12-08 → 2027-04-21 (+134d) |  |
| RHD4CZ2C082PT4300 | Stem for Fire Hydrant - (RD-C-8 /2)-Z2-C082-PT | 2026-12-09 → 2027-04-22 (+134d) | 2026-12-12 → 2027-04-25 (+134d) |  |
| RHD4CZ2C082PT4400 | Fire Installation for Fire Hydrant - (RD-C-8 /2)-Z2-C082-PT | 2026-12-13 → 2027-04-26 (+134d) | 2026-12-15 → 2027-04-28 (+134d) |  |
| RHD4CZ2C082PT4500 | Protection Barriers for Fire Hydrant - (RD-C-8 /2)-Z2-C082-PT | 2026-12-16 → 2027-04-29 (+134d) | 2026-12-17 → 2027-05-01 (+135d) |  |
| 809 | **RHD4-02-002-Z2-C082-Irrigation Network - IRR** | 2026-11-18 → 2027-04-01 (+134d) | 2026-12-23 → 2027-05-06 (+134d) |  |
| 814 | **RHD4-02-002-C082-(IRR)-HDPE Pipes - 315 mm diameter** | 2026-11-18 → 2027-04-01 (+134d) | 2026-12-23 → 2027-05-06 (+134d) |  |
| RHD4CZ2C082IRR1104 | Excavation works for HDPE Pipline 315 mm - (RD-C-8 /2)-Z2-C082-IRR | 2026-11-18 → 2027-04-01 (+134d) | 2026-11-26 → 2027-04-10 (+135d) |  |
| RHD4CZ2C082IRR1204 | Bedding works for HDPE Pipline 315 mm - (RD-C-8 /2)-Z2-C082-IRR | 2026-11-28 → 2027-04-11 (+134d) | 2026-12-03 → 2027-04-17 (+135d) |  |
| RHD4CZ2C082IRR1304 | Installing for HDPE Pipline 315 mm - (RD-C-8 /2)-Z2-C082-IRR | 2026-12-05 → 2027-04-18 (+134d) | 2026-12-13 → 2027-04-26 (+134d) |  |
| RHD4CZ2C082IRR1404 | Primary Test for HDPE Pipline 315 mm - (RD-C-8 /2)-Z2-C082-IRR | 2026-12-14 → 2027-04-27 (+134d) | 2026-12-16 → 2027-04-29 (+134d) |  |
| RHD4CZ2C082IRR1504 | Backfilling and warning tape works for HDPE Pipline 315 mm - (RD-C-8 /2)-Z2-C082-IRR | 2026-12-17 → 2027-05-01 (+135d) | 2026-12-23 → 2027-05-06 (+134d) |  |
| 6863 | **RHD4-02-002-C082-(IRR)-HDPE Pipes - 160 mm diameter** | 2026-11-28 → 2027-04-11 (+134d) | 2026-12-08 → 2027-04-21 (+134d) |  |
| RHD4CZ2C082IRR1100 | Excavation works for HDPE Pipline 160 mm - (RD-C-8 /2)-Z2-C082-IRR | 2026-11-28 → 2027-04-11 (+134d) | 2026-11-29 → 2027-04-12 (+134d) |  |
| RHD4CZ2C082IRR1200 | Bedding works for HDPE Pipline 160 mm - (RD-C-8 /2)-Z2-C082-IRR | 2026-11-30 → 2027-04-13 (+134d) | 2026-12-01 → 2027-04-14 (+134d) |  |
| RHD4CZ2C082IRR1300 | Installing for HDPE Pipline 160 mm - (RD-C-8 /2)-Z2-C082-IRR | 2026-12-02 → 2027-04-15 (+134d) | 2026-12-03 → 2027-04-17 (+135d) | resources Unskilled Labor [4.03 h]; Plumber [2.07 h]; Equipment Opreator [2.07 h]; Boom Truck [2.07 h]; HDPE (160mm Diameter) - TSE - Depth: less than 1.5m [12.6 m] → Unskilled Labor [4 h]; Plumber [2.07 h]; Equipment Opreator [2.07 h]; Boom Truck [2.07 h]; HDPE (160mm Diameter) - TSE - Depth: less than 1.5m [12.6 m] |
| RHD4CZ2C082IRR1400 | Primary Test for HDPE Pipline 160 mm - (RD-C-8 /2)-Z2-C082-IRR | 2026-12-05 → 2027-04-18 (+134d) | 2026-12-06 → 2027-04-19 (+134d) |  |
| RHD4CZ2C082IRR1500 | Backfilling and warning tape works for HDPE Pipline 160 mm - (RD-C-8 /2)-Z2-C082-IRR | 2026-12-07 → 2027-04-20 (+134d) | 2026-12-08 → 2027-04-21 (+134d) |  |
| 818 | **RHD4-02-002-C082-(IRR)-Gate Valves (Direct Buried)** | 2026-12-05 → 2027-04-18 (+134d) | 2026-12-08 → 2027-04-21 (+134d) |  |
| RHD4CZ2C082IRR3100 | Installation for Direct Buried Gate Valves - (RD-C-8 /2)-Z2-C082-IRR | 2026-12-05 → 2027-04-18 (+134d) | 2026-12-06 → 2027-04-19 (+134d) |  |
| RHD4CZ2C082IRR3200 | Stem and Service box for Direct Buried Gate Valves - (RD-C-8 /2)-Z2-C082-IRR | 2026-12-07 → 2027-04-20 (+134d) | 2026-12-08 → 2027-04-21 (+134d) |  |
| 856 | **RHD4-02-002-Z2-C082-Street Lighting Network - SL** | 2026-12-24 → 2027-05-08 (+135d) | 2027-02-17 → 2027-07-06 (+139d) |  |
| 857 | **RHD4-02-002-C082-(SL)-Street Lighting duct banks** | 2026-12-24 → 2027-05-08 (+135d) | 2027-01-09 → 2027-05-27 (+138d) |  |
| RHD4CZ2C082SL2100 | Excavation of Duct Banks for Street Lighting Network - (RD-C-8 /2)-Z2-C082-SL | 2026-12-24 → 2027-05-08 (+135d) | 2026-12-27 → 2027-05-10 (+134d) |  |
| RHD4CZ2C082SL2200 | Installation of Duct Banks for Street Lighting Network - (RD-C-8 /2)-Z2-C082-SL | 2026-12-28 → 2027-05-11 (+134d) | 2027-01-02 → 2027-05-20 (+138d) | resources Carpenter [4.79 h]; Skilled labor [47.48 h]; Unskilled Labor [47.48 h]; Steel Fixer [4.79 h]; Road Crossing Duct for Street Lighting cables UPVC (2x?110mm) [4.36 m] → Carpenter [4.8 h]; Skilled labor [47.48 h]; Unskilled Labor [47.48 h]; Steel Fixer [4.8 h]; Road Crossing Duct for Street Lighting cables UPVC (2x?110mm) [4.36 m] |
| RHD4CZ2C082SL2300 | Pouring of Duct Banks for Street Lighting Network - (RD-C-8 /2)-Z2-C082-SL | 2027-01-03 → 2027-05-22 (+139d) | 2027-01-05 → 2027-05-24 (+139d) |  |
| RHD4CZ2C082SL2400 | Backfilling of Duct Banks for Street Lighting Network - (RD-C-8 /2)-Z2-C082-SL | 2027-01-06 → 2027-05-25 (+139d) | 2027-01-09 → 2027-05-27 (+138d) |  |
| 858 | **RHD4-02-002-C082-(SL)-Street Lighting Drawpit** | 2027-01-13 → 2027-06-01 (+139d) | 2027-01-17 → 2027-06-05 (+139d) |  |
| RHD4CZ2C082SL5100 | Excavation of Drawpit size 600x600x900mm for Street Lighting Network - (RD-C-8 /2)-Z2-C082-SL | 2027-01-13 → 2027-06-01 (+139d) | 2027-01-14 → 2027-06-02 (+139d) | resources Skilled labor [1.85 h]; Unskilled Labor [1.85 h]; Equipment Opreator [1.42 h]; Excavator-Poclain [0.76 h]; Dump Truck [0.76 h]; Drawpit with medium duty steel cover, size600x600x900mm, [0.3 Unit] → Skilled labor [1.85 h]; Unskilled Labor [1.85 h]; Equipment Opreator [1.42 h]; Excavator-Poclain [0.8 h]; Dump Truck [0.8 h]; Drawpit with medium duty steel cover, size600x600x900mm, [0.3 Unit] |
| RHD4CZ2C082SL5200 | Installation of Drawpit size 600x600x900mm for Street Lighting Network - (RD-C-8 /2)-Z2-C082-SL | 2027-01-16 → 2027-06-03 (+138d) | 2027-01-17 → 2027-06-05 (+139d) | resources Skilled labor [1.85 h]; Unskilled Labor [1.85 h]; Equipment Opreator [0.76 h]; Boom Truck [0.76 h]; Drawpit with medium duty steel cover, size600x600x900mm, [1.7 Unit] → Skilled labor [1.85 h]; Unskilled Labor [1.85 h]; Equipment Opreator [0.8 h]; Boom Truck [0.8 h]; Drawpit with medium duty steel cover, size600x600x900mm, [1.7 Unit] |
| 860 | **RHD4-02-002-C082-(SL)-Street Lighting Poles** | 2027-01-10 → 2027-05-29 (+139d) | 2027-02-17 → 2027-07-06 (+139d) |  |
| RHD4CZ2C082SL1100 | Excavation for RC Base for Lighting Poles for Street Lighting Network - (RD-C-8 /2)-Z2-C082-SL | 2027-01-10 → 2027-05-29 (+139d) | 2027-01-12 → 2027-05-31 (+139d) |  |
| RHD4CZ2C082SL1200 | Installation for RC Base for Lighting Poles for Street Lighting Network - (RD-C-8 /2)-Z2-C082-SL | 2027-01-13 → 2027-06-01 (+139d) | 2027-01-16 → 2027-06-03 (+138d) |  |
| RHD4CZ2C082SL1300 | Backfill for RC Base for Lighting Poles for Street Lighting Network - (RD-C-8 /2)-Z2-C082-SL | 2027-01-17 → 2027-06-05 (+139d) | 2027-01-19 → 2027-06-07 (+139d) |  |
| RHD4CZ2C082SL1400 | Installation for Lighting Poles for Street Lighting Network - (RD-C-8 /2)-Z2-C082-SL | 2027-02-08 → 2027-06-27 (+139d) | 2027-02-11 → 2027-06-30 (+139d) |  |
| RHD4CZ2C082SL1500 | Luminaire Installation for Lighting Poles for Street Lighting Network - (RD-C-8 /2)-Z2-C082-SL | 2027-02-13 → 2027-07-01 (+138d) | 2027-02-17 → 2027-07-06 (+139d) |  |
| 859 | **RHD4-02-002-C082-(SL)-Street Lighting cables** | 2027-01-20 → 2027-06-08 (+139d) | 2027-02-07 → 2027-06-26 (+139d) |  |
| RHD4CZ2C082SL3100 | Excavation for Street Lighting Cables for Street Lighting Network - (RD-C-8 /2)-Z2-C082-SL | 2027-01-20 → 2027-06-08 (+139d) | 2027-01-25 → 2027-06-13 (+139d) | resources Skilled labor [46.39 h]; Unskilled Labor [92.79 h]; Equipment Opreator [92.79 h]; Excavator-Poclain [46.39 h]; Boom Truck [46.39 h]; Cable, Copper 4x10mm2/ CU/XLPE/SWA/PVC + 1x10mm2 CU/PVC [213.07 m] → Skilled labor [46.4 h]; Unskilled Labor [92.8 h]; Equipment Opreator [92.8 h]; Excavator-Poclain [46.4 h]; Boom Truck [46.4 h]; Cable, Copper 4x10mm2/ CU/XLPE/SWA/PVC + 1x10mm2 CU/PVC [213.07 m] |
| RHD4CZ2C082SL3200 | Cable Laying of Street Lighting Cables for Street Lighting Network - (RD-C-8 /2)-Z2-C082-SL | 2027-01-26 → 2027-06-14 (+139d) | 2027-01-30 → 2027-06-17 (+138d) | resources Skilled labor [38.66 h]; Unskilled Labor [154.64 h]; Electrician [77.32 h]; Equipment Opreator [115.98 h]; Boom Truck [38.66 h]; Cable Laying Machine [77.32 h]; Cable, Copper 4x10mm2/ CU/XLPE/SWA/PVC + 1x10mm2 CU/PVC [639.21 m] → Skilled labor [38.66 h]; Unskilled Labor [154.64 h]; Electrician [77.32 h]; Equipment Opreator [116 h]; Boom Truck [38.66 h]; Cable Laying Machine [77.32 h]; Cable, Copper 4x10mm2/ CU/XLPE/SWA/PVC + 1x10mm2 CU/PVC [639.21 m] |
| RHD4CZ2C082SL3300 | Warning tape and Backfill for Street Lighting Cables for Street Lighting Network - (RD-C-8 /2)-Z2-C082-SL | 2027-01-31 → 2027-06-19 (+139d) | 2027-02-03 → 2027-06-22 (+139d) |  |
| RHD4CZ2C082SL3400 | Testing of Street Lighting Cables for Street Lighting Network - (RD-C-8 /2)-Z2-C082-SL | 2027-02-04 → 2027-06-23 (+139d) | 2027-02-07 → 2027-06-26 (+139d) | resources Skilled labor [23.2 h]; Unskilled Labor [92.79 h]; Electrician [46.39 h]; Equipment Opreator [23.2 h]; Boom Truck [23.2 h]; Cable, Copper 4x10mm2/ CU/XLPE/SWA/PVC + 1x10mm2 CU/PVC [53.27 m] → Skilled labor [23.2 h]; Unskilled Labor [92.8 h]; Electrician [46.4 h]; Equipment Opreator [23.2 h]; Boom Truck [23.2 h]; Cable, Copper 4x10mm2/ CU/XLPE/SWA/PVC + 1x10mm2 CU/PVC [53.27 m] |
| 862 | **RHD4-02-002-C082-(SL)-Street Lighting Earthing System** | 2027-02-13 → 2027-07-01 (+138d) | 2027-02-14 → 2027-07-03 (+139d) |  |
| RHD4CZ2C082SL6100 | Installation of Earthing for Lighting Poles and Fedder Pillers for Street Lighting Network - (RD-C-8 /2)-Z2-C082-SL | 2027-02-13 → 2027-07-01 (+138d) | 2027-02-14 → 2027-07-03 (+139d) |  |
| 868 | **RHD4-02-002-Z2-C082-Telecommunications Network - TC** | 2026-12-09 → 2027-04-22 (+134d) | 2027-02-18 → 2027-07-07 (+139d) |  |

| ID | Task | Start | Finish | Duration | Other |
| --- | --- | --- | --- | --- | --- |
| 869 | **RHD4-02-002-C082-(TC)-Telecommunications Ducts** | 2026-12-09 → 2027-04-22 (+134d) | 2027-01-09 → 2027-05-27 (+138d) |  |  |
| RHD4CZ2C082TC2100 | Excavation of HDPE Ducts for Telecom Network - (RD-C-8 /2)-Z2-C082-TC | 2026-12-09 → 2027-04-22 (+134d) | 2026-12-17 → 2027-05-01 (+135d) |  |  |
| RHD4CZ2C082TC2200 | Installation of HDPE Ducts for Telecom Network - (RD-C-8 /2)-Z2-C082-TC | 2026-12-19 → 2027-05-02 (+134d) | 2026-12-30 → 2027-05-13 (+134d) |  |  |
| RHD4CZ2C082TC2400 | Backfilling of HDPE Ducts for Telecom Network - (RD-C-8 /2)-Z2-C082-TC | 2026-12-31 → 2027-05-19 (+139d) | 2027-01-09 → 2027-05-27 (+138d) |  |  |
| 870 | **RHD4-02-002-C082-(TC)-Telecommunications Manholes** | 2027-02-15 → 2027-07-04 (+139d) | 2027-02-18 → 2027-07-07 (+139d) |  |  |
| RHD4CZ2C082TC5100 | Excavation for Manholes for Telecom Network - (RD-C-8 /2)-Z2-C082-TC | 2027-02-15 → 2027-07-04 (+139d) | 2027-02-16 → 2027-07-05 (+139d) |  |  |
| RHD4CZ2C082TC5200 | Installation of Manholes for Telecom Network - (RD-C-8 /2)-Z2-C082-TC | 2027-02-17 → 2027-07-06 (+139d) | 2027-02-18 → 2027-07-07 (+139d) |  |  |
| 872 | **RHD4-02-002-Z2-C082-Information and Communication Technologies - ICT** | 2026-12-09 → 2027-04-22 (+134d) | 2027-01-06 → 2027-05-25 (+139d) |  |  |
| 873 | **RHD4-02-002-C082-(ICT)-Information and Communication Technologies Ducts** | 2026-12-09 → 2027-04-22 (+134d) | 2027-01-06 → 2027-05-25 (+139d) |  |  |
| RHD4CZ2C082ICT2100 | Excavation of HDPE Ducts for ICT Network - (RD-C-8 /2)-Z2-C082-ICT | 2026-12-09 → 2027-04-22 (+134d) | 2026-12-16 → 2027-04-29 (+134d) |  |  |
| RHD4CZ2C082ICT2200 | Installation of HDPE Ducts for ICT Network - (RD-C-8 /2)-Z2-C082-ICT | 2026-12-17 → 2027-05-01 (+135d) | 2026-12-29 → 2027-05-12 (+134d) |  |  |
| RHD4CZ2C082ICT2400 | Backfilling of HDPE Ducts for ICT Network - (RD-C-8 /2)-Z2-C082-ICT | 2026-12-30 → 2027-05-13 (+134d) | 2027-01-06 → 2027-05-25 (+139d) |  |  |
| 874 | **RHD4-02-002-C082-(ICT)-Information and Communication Technologies Manholes** | 2026-12-17 → 2027-05-01 (+135d) | 2026-12-23 → 2027-05-06 (+134d) |  |  |
| RHD4CZ2C082ICT5100 | Excavation for Manholes for ICT Network - (RD-C-8 /2)-Z2-C082-ICT | 2026-12-17 → 2027-05-01 (+135d) | 2026-12-20 → 2027-05-03 (+134d) |  |  |
| RHD4CZ2C082ICT5200 | Installation of Manholes for ICT Network - (RD-C-8 /2)-Z2-C082-ICT | 2026-12-21 → 2027-05-04 (+134d) | 2026-12-23 → 2027-05-06 (+134d) |  |  |
| 876 | **RHD4-02-002-Z2-C082-Security Network - CCTV** | 2027-01-10 → 2027-05-29 (+139d) | 2027-02-24 → 2027-07-12 (+138d) |  |  |
| 877 | **RHD4-02-002-C082-(CCTV)-Civil Works** | 2027-01-10 → 2027-05-29 (+139d) | 2027-01-20 → 2027-06-08 (+139d) |  |  |
| RHD4CZ2C082CCTV2100 | Civil Works for Security Network - (RD-C-8 /2)-Z2-C082-CCTV | 2027-01-10 → 2027-05-29 (+139d) | 2027-01-20 → 2027-06-08 (+139d) |  |  |
| 878 | **RHD4-02-002-C082-(CCTV)-CCTV Poles** | 2027-01-21 → 2027-06-09 (+139d) | 2027-02-01 → 2027-06-20 (+139d) |  |  |
| RHD4CZ2C082CCTV1100 | Excavation for RC Base for CCTV Poles for Security Network - (RD-C-8 /2)-Z2-C082-CCTV | 2027-01-21 → 2027-06-09 (+139d) | 2027-01-23 → 2027-06-10 (+138d) |  |  |
| RHD4CZ2C082CCTV1200 | Installation for RC Base for CCTV Poles for Security Network - (RD-C-8 /2)-Z2-C082-CCTV | 2027-01-24 → 2027-06-12 (+139d) | 2027-01-25 → 2027-06-13 (+139d) |  |  |
| RHD4CZ2C082CCTV1300 | Backfill for RC Base for CCTV Poles for Security Network - (RD-C-8 /2)-Z2-C082-CCTV | 2027-01-26 → 2027-06-14 (+139d) | 2027-01-27 → 2027-06-15 (+139d) |  |  |
| RHD4CZ2C082CCTV1400 | Installation for CCTV Poles for Security Network - (RD-C-8 /2)-Z2-C082-CCTV | 2027-01-28 → 2027-06-16 (+139d) | 2027-01-30 → 2027-06-17 (+138d) |  |  |
| RHD4CZ2C082CCTV1500 | Protection post Installation for CCTV Poles for Security Network - (RD-C-8 /2)-Z2-C082-CCTV | 2027-01-31 → 2027-06-19 (+139d) | 2027-02-01 → 2027-06-20 (+139d) |  |  |
| 879 | **RHD4-02-002-C082-(CCTV)-Camera** | 2027-02-04 → 2027-06-23 (+139d) | 2027-02-06 → 2027-06-24 (+138d) |  |  |
| RHD4CZ2C082CCTV3100 | Installation for Cameras for Security Network - (RD-C-8 /2)-Z2-C082-CCTV | 2027-02-04 → 2027-06-23 (+139d) | 2027-02-06 → 2027-06-24 (+138d) |  |  |
| 880 | **RHD4-02-002-C082-(CCTV)-Power and Infrastructure** | 2027-01-31 → 2027-06-19 (+139d) | 2027-02-03 → 2027-06-22 (+139d) |  |  |
| RHD4CZ2C082CCTV4100 | Installation of Power outlet, UPS and midspan for PTZ Camerafor Cameras for Security Network - (RD-C-8 /2)-Z2-C082-CCTV | 2027-01-31 → 2027-06-19 (+139d) | 2027-02-01 → 2027-06-20 (+139d) |  |  |
| RHD4CZ2C082CCTV4200 | Short Range Wireless PoP wireless Bridgefor CCTV Poles for Security Network - (RD-C-8 /2)-Z2-C082-CCTV | 2027-02-02 → 2027-06-21 (+139d) | 2027-02-03 → 2027-06-22 (+139d) |  |  |
| 882 | **RHD4-02-002-C082-(CCTV)-CCTV Panels and Components** | 2027-02-07 → 2027-06-26 (+139d) | 2027-02-24 → 2027-07-12 (+138d) |  |  |
| RHD4CZ2C082CCTV6100 | Installation for CCTV Panels for Security Network - (RD-C-8 /2)-Z2-C082-CCTV | 2027-02-07 → 2027-06-26 (+139d) | 2027-02-24 → 2027-07-12 (+138d) |  |  |
| 324 | **RHD4-02-002-Z1** | 2026-08-23 → 2026-10-19 (+57d) | 2027-09-07 → 2028-04-03 (+209d) |  |  |
| 514 | **RHD4-02-002-Z1-L101** | 2026-08-23 → 2026-10-19 (+57d) | 2027-08-26 → 2028-03-22 (+209d) |  |  |
| 693 | **RHD4-02-002-Z1-L101-Road Works - RD** | 2026-09-13 → 2027-04-06 (+205d) | 2027-08-26 → 2028-03-22 (+209d) |  |  |
| 694 | **RHD4-02-002-L101-(RD)-Subgrade** | 2026-09-13 → 2027-04-06 (+205d) | 2026-09-19 → 2027-04-19 (+212d) |  |  |
| RHD4CZ1L101RD1100 | Supply, lay and compaction subgrade compacted thickness 300 mm for Roads - (RD-L-10/1)-Z1-L101-RD | 2026-09-13 → 2027-04-06 (+205d) | 2026-09-19 → 2027-04-19 (+212d) | 6d → 12d | resources Skilled labor [125.89 h]; Unskilled Labor [251.78 h]; Electrician [125.89 h]; Equipment Opreator [860.01 h]; Water Truck [41.6 h]; Roller compactor [62.95 h]; Grader [125.89 h]; Dump Truck [629.57 h]; Subgrade [6055.96 m3] → Skilled labor [125.89 h]; Unskilled Labor [251.78 h]; Electrician [125.89 h]; Equipment Opreator [860 h]; Water Truck [41.6 h]; Roller compactor [62.95 h]; Grader [125.89 h]; Dump Truck [629.6 h]; Subgrade [6055.96 m3] |
| 695 | **RHD4-02-002-L101-(RD)-Aggregate Base Course** | 2026-09-20 → 2027-04-20 (+212d) | 2026-09-28 → 2027-04-29 (+213d) |  |  |
| RHD4CZ1L101RD2100 | Supply, lay and compaction Aggregate base course compacted thickness 300 mmfor Roads - (RD-L-10/1)-Z1-L101-RD | 2026-09-20 → 2027-04-20 (+212d) | 2026-09-28 → 2027-04-29 (+213d) | 7d → 9d | resources Skilled labor [46.61 h]; Unskilled Labor [93.22 h]; Equipment Opreator [590.37 h]; Water Truck [30.82 h]; Roller compactor [93.22 h]; Grader [93.22 h]; Dump Truck [373.1 h]; Aggregate Base Courses [3803.75 m3] → Skilled labor [46.61 h]; Unskilled Labor [93.22 h]; Equipment Opreator [590.4 h]; Water Truck [30.82 h]; Roller compactor [93.22 h]; Grader [93.22 h]; Dump Truck [373.1 h]; Aggregate Base Courses [3803.75 m3] |
| 696 | **RHD4-02-002-L101-(RD)-Bituminous base course Two Layers, including (MC1)&(RC2)** | 2026-09-29 → 2027-05-01 (+214d) | 2027-07-14 → 2028-02-03 (+204d) |  |  |
| RHD4CZ1L101RD3100 | Supply, lay and Asphaltic base course including Prime Coat (MC1) for 1st Layer - (RD-L-10/1)-Z1-L101-RD | 2026-09-29 → 2027-05-01 (+214d) | 2026-09-30 → 2027-05-02 (+214d) |  |  |
| RHD4CZ1L101RD3200 | Supply, lay and Asphaltic base course including Tack Coat (RC2) for 2nd Layer - (RD-L-10/1)-Z1-L101-RD | 2027-07-13 → 2028-02-02 (+204d) | 2027-07-14 → 2028-02-03 (+204d) |  |  |
| 698 | **RHD4-02-002-L101-(RD)-Precast Concrete Curb** | 2027-07-15 → 2028-02-05 (+205d) | 2027-07-21 → 2028-02-10 (+204d) |  |  |
| RHD4CZ1L101RD5100 | Supply and installation Precast Concrete Kerb for Roads - (RD-L-10/1)-Z1-L101-RD | 2027-07-15 → 2028-02-05 (+205d) | 2027-07-21 → 2028-02-10 (+204d) |  |  |
| 701 | **RHD4-02-002-L101-(RD)-Traffic Signage** | 2027-07-22 → 2028-02-12 (+205d) | 2027-07-29 → 2028-02-19 (+205d) |  |  |
| RHD4CZ1L101RD8100 | Installation of Traffic Signage for Road Network - (RD-L-10/1)-Z1-L101-RD | 2027-07-22 → 2028-02-12 (+205d) | 2027-07-29 → 2028-02-19 (+205d) |  |  |
| 699 | **RHD4-02-002-L101-(RD)-Precast Interlocking Block Pavers** | 2027-07-31 → 2028-02-20 (+204d) | 2027-08-16 → 2028-03-12 (+209d) |  |  |
| RHD4CZ1L101RD6100 | Interlocking block pavers for sidewalk-footpath for Side walks and Parking areas - (RD-L-10/1)-Z1-L101-RD | 2027-07-31 → 2028-02-20 (+204d) | 2027-08-16 → 2028-03-12 (+209d) |  |  |
| 697 | **RHD4-02-002-L101-(RD)-Bituminous concrete wearing course including tack coat (RC2)** | 2027-08-17 → 2028-03-13 (+209d) | 2027-08-18 → 2028-03-14 (+209d) |  |  |
| RHD4CZ1L101RD4100 | Supply, lay and compaction Asphaltic wearing course including tack Coat (RC2)for Road Network - (RD-L-10/1)-Z1-L101-RD | 2027-08-17 → 2028-03-13 (+209d) | 2027-08-18 → 2028-03-14 (+209d) |  |  |
| 700 | **RHD4-02-002-L101-(RD)-Pavement Marking** | 2027-08-19 → 2028-03-15 (+209d) | 2027-08-26 → 2028-03-22 (+209d) |  |  |
| RHD4CZ1L101RD7100 | Pavement Markings for Road Network - (RD-L-10/1)-Z1-L101-RD | 2027-08-19 → 2028-03-15 (+209d) | 2027-08-26 → 2028-03-22 (+209d) |  |  |
| 518 | **RHD4-02-002-Z1-L101-Storm Network - ST** | 2026-08-23 → 2027-03-04 (+193d) | 2026-11-09 → 2027-06-06 (+209d) |  |  |
| 536 | **RHD4-02-002-L101-(ST)-MH Works - 1500 mm diameter** | 2026-09-03 → 2027-03-28 (+206d) | 2026-10-28 → 2027-05-25 (+209d) |  |  |
| RHD4CZ1L101ST3101 | Excavation and PC Blinding works for MH 1500 mm - (RD-L-10/1)-Z1-L101-ST | 2026-09-03 → 2027-03-28 (+206d) | 2026-09-07 → 2027-03-31 (+205d) |  |  |
| RHD4CZ1L101ST3201 | Installation of Base for MH 1500 mm - (RD-L-10/1)-Z1-L101-ST | 2026-09-08 → 2027-04-01 (+205d) | 2026-09-12 → 2027-04-05 (+205d) |  |  |
| RHD4CZ1L101ST3301 | MH Ring and C.Slab works and Backfilling works for MH 1500 mm - (RD-L-10/1)-Z1-L101-ST | 2026-09-13 → 2027-04-06 (+205d) | 2026-09-16 → 2027-04-10 (+206d) |  |  |
| RHD4CZ1L101ST3401 | Steel Cover for MH 1500 mm - (RD-L-10/1)-Z1-L101-ST | 2026-10-21 → 2027-05-13 (+204d) | 2026-10-24 → 2027-05-20 (+208d) |  |  |
| RHD4CZ1L101ST3501 | Finishing, Benching, Testing works for MH 1500 mm - (RD-L-10/1)-Z1-L101-ST | 2026-10-25 → 2027-05-22 (+209d) | 2026-10-28 → 2027-05-25 (+209d) |  |  |
| 535 | **RHD4-02-002-L101-(ST)-MH Works - 1200 mm diameter** | 2026-10-29 → 2027-05-26 (+209d) | 2026-11-09 → 2027-06-06 (+209d) |  |  |
| RHD4CZ1L101ST3100 | Excavation and PC Blinding works for MH 1200 mm - (RD-L-10/1)-Z1-L101-ST | 2026-10-29 → 2027-05-26 (+209d) | 2026-10-31 → 2027-05-27 (+208d) |  |  |
| RHD4CZ1L101ST3200 | Installation of Base for MH 1200 mm - (RD-L-10/1)-Z1-L101-ST | 2026-11-01 → 2027-05-29 (+209d) | 2026-11-02 → 2027-05-30 (+209d) |  |  |
| RHD4CZ1L101ST3300 | MH Ring and C.Slab works and Backfilling works for MH 1200 mm - (RD-L-10/1)-Z1-L101-ST | 2026-11-03 → 2027-05-31 (+209d) | 2026-11-04 → 2027-06-01 (+209d) |  |  |
| RHD4CZ1L101ST3400 | Steel Cover for MH 1200 mm - (RD-L-10/1)-Z1-L101-ST | 2026-11-05 → 2027-06-02 (+209d) | 2026-11-07 → 2027-06-03 (+208d) |  |  |
| RHD4CZ1L101ST3500 | Finishing, Benching, Testing works for MH 1200 mm - (RD-L-10/1)-Z1-L101-ST | 2026-11-08 → 2027-06-05 (+209d) | 2026-11-09 → 2027-06-06 (+209d) |  |  |
| 524 | **RHD4-02-002-L101-(ST)-GRP Pipes - 900 mm diameter** | 2026-08-23 → 2027-03-04 (+193d) | 2026-09-02 → 2027-03-27 (+206d) |  |  |
| RHD4CZ1L101ST1105 | Excavation works for GRP Pipe Line 900 mm - (RD-L-10/1)-Z1-L101-ST | 2026-08-23 → 2027-03-04 (+193d) | 2026-08-24 → 2027-03-06 (+194d) |  |  |
| RHD4CZ1L101ST1205 | Bedding works for GRP Pipe Line 900 mm - (RD-L-10/1)-Z1-L101-ST | 2026-08-25 → 2027-03-18 (+205d) | 2026-08-26 → 2027-03-20 (+206d) |  |  |
| RHD4CZ1L101ST1305 | Installing for GRP Pipe Line 900 mm - (RD-L-10/1)-Z1-L101-ST | 2026-08-27 → 2027-03-21 (+206d) | 2026-08-29 → 2027-03-22 (+205d) |  |  |
| RHD4CZ1L101ST1405 | Primary Test for GRP Pipe Line 900 mm - (RD-L-10/1)-Z1-L101-ST | 2026-08-30 → 2027-03-23 (+205d) | 2026-08-31 → 2027-03-24 (+205d) |  |  |
| RHD4CZ1L101ST1505 | Backfilling and warning tape works for GRP Pipe Line 900 mm - (RD-L-10/1)-Z1-L101-ST | 2026-09-01 → 2027-03-25 (+205d) | 2026-09-02 → 2027-03-27 (+206d) |  |  |

| ID | Task | Start | Finish | Duration | Complete | Other |
| --- | --- | --- | --- | --- | --- | --- |
| 523 | **RHD4-02-002-L101-(ST)-GRP Pipes - 800 mm diameter** | 2026-09-03 → 2027-03-28 (+206d) | 2026-09-14 → 2027-04-07 (+205d) |  |  |  |
| RHD4CZ1L101ST1104 | Excavation works for GRP Pipe Line 800 mm - (RD-L-10/1)-Z1-L101-ST | 2026-09-03 → 2027-03-28 (+206d) | 2026-09-05 → 2027-03-29 (+205d) |  |  | resources Skilled labor [7.95 h]; Unskilled Labor [7.95 h]; Equipment Opreator [9.58 h]; Excavator-Poclain [7.95 h]; Dump Truck [1.63 h]; GRP (800mm Diameter) - ST - Depth: 1.51m - 2.5m [21.94 m] → Skilled labor [7.95 h]; Unskilled Labor [7.95 h]; Equipment Opreator [9.6 h]; Excavator-Poclain [7.95 h]; Dump Truck [1.6 h]; GRP (800mm Diameter) - ST - Depth: 1.51m - 2.5m [21.94 m] |
| RHD4CZ1L101ST1204 | Bedding works for GRP Pipe Line 800 mm - (RD-L-10/1)-Z1-L101-ST | 2026-09-06 → 2027-03-30 (+205d) | 2026-09-07 → 2027-03-31 (+205d) |  |  |  |
| RHD4CZ1L101ST1304 | Installing for GRP Pipe Line 800 mm - (RD-L-10/1)-Z1-L101-ST | 2026-09-08 → 2027-04-01 (+205d) | 2026-09-09 → 2027-04-03 (+206d) |  |  |  |
| RHD4CZ1L101ST1404 | Primary Test for GRP Pipe Line 800 mm - (RD-L-10/1)-Z1-L101-ST | 2026-09-10 → 2027-04-04 (+206d) | 2026-09-12 → 2027-04-05 (+205d) |  |  | resources Unskilled Labor [4.03 h]; Plumber [4.03 h]; Equipment Opreator [4.03 h]; Water Truck [4.03 h]; GRP (800mm Diameter) - ST - Depth: 1.51m - 2.5m [29.25 m] → Unskilled Labor [4 h]; Plumber [4 h]; Equipment Opreator [4 h]; Water Truck [4 h]; GRP (800mm Diameter) - ST - Depth: 1.51m - 2.5m [29.25 m] |
| RHD4CZ1L101ST1504 | Backfilling and warning tape works for GRP Pipe Line 800 mm - (RD-L-10/1)-Z1-L101-ST | 2026-09-13 → 2027-04-06 (+205d) | 2026-09-14 → 2027-04-07 (+205d) |  |  |  |
| 522 | **RHD4-02-002-L101-(ST)-GRP Pipes - 700 mm diameter** | 2026-09-15 → 2027-04-08 (+205d) | 2026-09-27 → 2027-04-19 (+204d) |  |  |  |
| RHD4CZ1L101ST1103 | Excavation works for GRP Pipe Line 700 mm - (RD-L-10/1)-Z1-L101-ST | 2026-09-15 → 2027-04-08 (+205d) | 2026-09-16 → 2027-04-10 (+206d) |  |  | resources Skilled labor [4.03 h]; Unskilled Labor [4.03 h]; Equipment Opreator [4.9 h]; Excavator-Poclain [4.03 h]; Dump Truck [0.76 h]; GRP (700mm Diameter) - ST - Depth: 1.51m - 2.5m [11.19 m] → Skilled labor [4 h]; Unskilled Labor [4 h]; Equipment Opreator [4.9 h]; Excavator-Poclain [4 h]; Dump Truck [0.8 h]; GRP (700mm Diameter) - ST - Depth: 1.51m - 2.5m [11.19 m] |
| RHD4CZ1L101ST1203 | Bedding works for GRP Pipe Line 700 mm - (RD-L-10/1)-Z1-L101-ST | 2026-09-17 → 2027-04-11 (+206d) | 2026-09-19 → 2027-04-12 (+205d) |  |  | resources Skilled labor [4.03 h]; Unskilled Labor [8.17 h]; Equipment Opreator [8.17 h]; Excavator-Poclain [4.03 h]; Dump Truck [4.03 h]; GRP (700mm Diameter) - ST - Depth: 1.51m - 2.5m [3.73 m] → Skilled labor [4 h]; Unskilled Labor [8.17 h]; Equipment Opreator [8.17 h]; Excavator-Poclain [4 h]; Dump Truck [4 h]; GRP (700mm Diameter) - ST - Depth: 1.51m - 2.5m [3.73 m] |
| RHD4CZ1L101ST1303 | Installing for GRP Pipe Line 700 mm - (RD-L-10/1)-Z1-L101-ST | 2026-09-20 → 2027-04-13 (+205d) | 2026-09-21 → 2027-04-14 (+205d) |  |  | resources Unskilled Labor [4.03 h]; Plumber [2.07 h]; GRP (700mm Diameter) - ST - Depth: 1.51m - 2.5m [29.84 m] → Unskilled Labor [4 h]; Plumber [2.07 h]; GRP (700mm Diameter) - ST - Depth: 1.51m - 2.5m [29.84 m] |
| RHD4CZ1L101ST1403 | Primary Test for GRP Pipe Line 700 mm - (RD-L-10/1)-Z1-L101-ST | 2026-09-22 → 2027-04-15 (+205d) | 2026-09-24 → 2027-04-17 (+205d) |  |  |  |
| RHD4CZ1L101ST1503 | Backfilling and warning tape works for GRP Pipe Line 700 mm - (RD-L-10/1)-Z1-L101-ST | 2026-09-26 → 2027-04-18 (+204d) | 2026-09-27 → 2027-04-19 (+204d) |  |  | resources Skilled labor [4.03 h]; Unskilled Labor [8.17 h]; Equipment Opreator [8.17 h]; Excavator-Poclain [4.03 h]; Dump Truck [4.03 h]; GRP (700mm Diameter) - ST - Depth: 1.51m - 2.5m [14.92 m] → Skilled labor [4 h]; Unskilled Labor [8.17 h]; Equipment Opreator [8.17 h]; Excavator-Poclain [4 h]; Dump Truck [4 h]; GRP (700mm Diameter) - ST - Depth: 1.51m - 2.5m [14.92 m] |
| 521 | **RHD4-02-002-L101-(ST)-GRP Pipes - 600 mm diameter** | 2026-09-28 → 2027-04-20 (+204d) | 2026-10-08 → 2027-05-01 (+205d) |  |  |  |
| RHD4CZ1L101ST1102 | Excavation works for GRP Pipe Line 600 mm - (RD-L-10/1)-Z1-L101-ST | 2026-09-28 → 2027-04-20 (+204d) | 2026-09-29 → 2027-04-21 (+204d) |  |  |  |
| RHD4CZ1L101ST1202 | Bedding works for GRP Pipe Line 600 mm - (RD-L-10/1)-Z1-L101-ST | 2026-09-30 → 2027-04-22 (+204d) | 2026-10-01 → 2027-04-24 (+205d) |  |  |  |
| RHD4CZ1L101ST1302 | Installing for GRP Pipe Line 600 mm - (RD-L-10/1)-Z1-L101-ST | 2026-10-03 → 2027-04-25 (+204d) | 2026-10-04 → 2027-04-26 (+204d) |  |  |  |
| RHD4CZ1L101ST1402 | Primary Test for GRP Pipe Line 600 mm - (RD-L-10/1)-Z1-L101-ST | 2026-10-05 → 2027-04-27 (+204d) | 2026-10-06 → 2027-04-28 (+204d) |  |  |  |
| RHD4CZ1L101ST1502 | Backfilling and warning tape works for GRP Pipe Line 600 mm - (RD-L-10/1)-Z1-L101-ST | 2026-10-07 → 2027-04-29 (+204d) | 2026-10-08 → 2027-05-01 (+205d) |  |  |  |
| 520 | **RHD4-02-002-L101-(ST)-GRP Pipes - 500 mm diameter** | 2026-09-30 → 2027-04-22 (+204d) | 2026-10-11 → 2027-05-03 (+204d) |  |  |  |
| RHD4CZ1L101ST1101 | Excavation works for GRP Pipe Line 500 mm - (RD-L-10/1)-Z1-L101-ST | 2026-09-30 → 2027-04-22 (+204d) | 2026-10-01 → 2027-04-24 (+205d) |  |  |  |
| RHD4CZ1L101ST1201 | Bedding works for GRP Pipe Line 500 mm - (RD-L-10/1)-Z1-L101-ST | 2026-10-03 → 2027-04-25 (+204d) | 2026-10-04 → 2027-04-26 (+204d) |  |  |  |
| RHD4CZ1L101ST1301 | Installing for GRP Pipe Line 500 mm - (RD-L-10/1)-Z1-L101-ST | 2026-10-05 → 2027-04-27 (+204d) | 2026-10-06 → 2027-04-28 (+204d) |  |  |  |
| RHD4CZ1L101ST1401 | Primary Test for GRP Pipe Line 500 mm - (RD-L-10/1)-Z1-L101-ST | 2026-10-07 → 2027-04-29 (+204d) | 2026-10-08 → 2027-05-01 (+205d) |  |  |  |
| RHD4CZ1L101ST1501 | Backfilling and warning tape works for GRP Pipe Line 500 mm - (RD-L-10/1)-Z1-L101-ST | 2026-10-10 → 2027-05-02 (+204d) | 2026-10-11 → 2027-05-03 (+204d) |  |  |  |
| 519 | **RHD4-02-002-L101-(ST)-GRP Pipes - 400 mm diameter** | 2026-10-03 → 2027-04-25 (+204d) | 2026-10-13 → 2027-05-05 (+204d) |  |  |  |
| RHD4CZ1L101ST1100 | Excavation works for GRP Pipe Line 400 mm - (RD-L-10/1)-Z1-L101-ST | 2026-10-03 → 2027-04-25 (+204d) | 2026-10-04 → 2027-04-26 (+204d) |  |  |  |
| RHD4CZ1L101ST1200 | Bedding works for GRP Pipe Line 400 mm - (RD-L-10/1)-Z1-L101-ST | 2026-10-05 → 2027-04-27 (+204d) | 2026-10-06 → 2027-04-28 (+204d) |  |  |  |
| RHD4CZ1L101ST1300 | Installing for GRP Pipe Line 400 mm - (RD-L-10/1)-Z1-L101-ST | 2026-10-07 → 2027-04-29 (+204d) | 2026-10-08 → 2027-05-01 (+205d) |  |  |  |
| RHD4CZ1L101ST1400 | Primary Test for GRP Pipe Line 400 mm - (RD-L-10/1)-Z1-L101-ST | 2026-10-10 → 2027-05-02 (+204d) | 2026-10-11 → 2027-05-03 (+204d) |  |  |  |
| RHD4CZ1L101ST1500 | Backfilling and warning tape works for GRP Pipe Line 400 mm - (RD-L-10/1)-Z1-L101-ST | 2026-10-12 → 2027-05-04 (+204d) | 2026-10-13 → 2027-05-05 (+204d) |  |  | resources Skilled labor [1.63 h]; Unskilled Labor [3.16 h]; Equipment Opreator [3.16 h]; Excavator-Poclain [1.63 h]; Dump Truck [1.63 h]; GRP (400mm Diameter) - ST - Depth less than 1.5 m [5.85 m] → Skilled labor [1.6 h]; Unskilled Labor [3.16 h]; Equipment Opreator [3.16 h]; Excavator-Poclain [1.6 h]; Dump Truck [1.6 h]; GRP (400mm Diameter) - ST - Depth less than 1.5 m [5.85 m] |
| 533 | **RHD4-02-002-L101-(ST)-UPVC Pipes - 300 mm diameter** | 2026-10-14 → 2027-05-06 (+204d) | 2026-10-26 → 2027-05-23 (+209d) |  |  |  |
| RHD4CZ1L101ST2100 | Excavation works for UPVC Pipe Line 300 mm - (RD-L-10/1)-Z1-L101-ST | 2026-10-14 → 2027-05-06 (+204d) | 2026-10-15 → 2027-05-08 (+205d) |  |  |  |
| RHD4CZ1L101ST2200 | Bedding works for UPVC Pipe Line 300 mm - (RD-L-10/1)-Z1-L101-ST | 2026-10-17 → 2027-05-09 (+204d) | 2026-10-18 → 2027-05-10 (+204d) |  |  |  |
| RHD4CZ1L101ST2300 | Installing for UPVC Pipe Line 300 mm - (RD-L-10/1)-Z1-L101-ST | 2026-10-19 → 2027-05-11 (+204d) | 2026-10-20 → 2027-05-12 (+204d) |  |  |  |
| RHD4CZ1L101ST2400 | Primary Test for UPVC Pipe Line 300 mm - (RD-L-10/1)-Z1-L101-ST | 2026-10-21 → 2027-05-13 (+204d) | 2026-10-22 → 2027-05-19 (+209d) |  |  | resources Unskilled Labor [11.22 h]; Plumber [11.22 h]; Equipment Opreator [11.22 h]; Water Truck [11.22 h]; UPVC (300mm Diameter) - ST - Depth less than 1.5 [94.19 m]; UPVC (300mm Diameter) - ST - Depth: 1.51m - 2.5m → Unskilled Labor [11.2 h]; Plumber [11.2 h]; Equipment Opreator [11.2 h]; Water Truck [11.2 h]; UPVC (300mm Diameter) - ST - Depth less than 1.5 [94.19 m]; UPVC (300mm Diameter) - ST - Depth: 1.51m - 2.5m |
| RHD4CZ1L101ST2500 | Backfilling and warning tape works for UPVC Pipe Line 300 mm - (RD-L-10/1)-Z1-L101-ST | 2026-10-24 → 2027-05-20 (+208d) | 2026-10-26 → 2027-05-23 (+209d) |  |  | resources Skilled labor [25.59 h]; Unskilled Labor [51.29 h]; Equipment Opreator [51.29 h]; Excavator-Poclain [25.59 h]; Dump Truck [25.59 h]; UPVC (300mm Diameter) - ST - Depth less than 1.5 [94.19 m]; UPVC (300mm Diameter) - ST - Depth: 1.51m - 2.5m → Skilled labor [25.6 h]; Unskilled Labor [51.29 h]; Equipment Opreator [51.29 h]; Excavator-Poclain [25.6 h]; Dump Truck [25.6 h]; UPVC (300mm Diameter) - ST - Depth less than 1.5 [94.19 m]; UPVC (300mm Diameter) - ST - Depth: 1.51m - 2.5m |
| 541 | **RHD4-02-002-L101-(ST)-Concrete Encasement** | 2026-10-19 → 2027-05-11 (+204d) | 2026-10-20 → 2027-05-12 (+204d) |  |  |  |
| RHD4CZ1L101ST6100 | Pipe Encasement for Storm Pipelines - (RD-L-10/1)-Z1-L101-ST | 2026-10-19 → 2027-05-11 (+204d) | 2026-10-20 → 2027-05-12 (+204d) |  |  |  |
| 542 | **RHD4-02-002-Z1-L101-Catch Basin - ST** | 2026-08-25 → 2026-10-27 (+63d) | 2026-11-17 → 2027-06-14 (+209d) |  |  |  |
| 543 | **RHD4-02-002-L101-(ST)-Single Catch Basin Works** | 2026-08-25 → 2026-10-27 (+63d) | 2026-11-17 → 2027-06-14 (+209d) |  |  |  |
| RHD4CZ1L101ST7100 | Excavation works for Single Catch Basin - (RD-L-10/1)-Z1-L101-ST | 2026-08-25 → 2026-10-27 A (+63d) | 2026-08-26 → 2026-10-29 A (+64d) | 2d → 3d | 0% → 100% |  |
| RHD4CZ1L101ST7200 | PC Blinding, Installation and Pipe connection for Single Catch Basin - (RD-L-10/1)-Z1-L101-ST | 2026-08-27 → 2027-03-07 (+192d) | 2026-08-29 → 2027-03-13 (+196d) | 2d → 3d |  |  |
| RHD4CZ1L101ST7300 | Rings & C.Slab & Final Backfill for Single Catch Basin - (RD-L-10/1)-Z1-L101-ST | 2026-08-30 → 2027-03-14 (+196d) | 2026-08-31 → 2027-03-17 (+198d) | 2d → 4d |  |  |
| RHD4CZ1L101ST7400 | Steel Cover for Single Catch Basin - (RD-L-10/1)-Z1-L101-ST | 2026-11-08 → 2027-06-05 (+209d) | 2026-11-10 → 2027-06-07 (+209d) |  |  |  |
| RHD4CZ1L101ST7500 | Finishing and Insulation works for Single Catch Basin - (RD-L-10/1)-Z1-L101-ST | 2026-11-11 → 2027-06-08 (+209d) | 2026-11-17 → 2027-06-14 (+209d) |  |  |  |
| 567 | **RHD4-02-002-Z1-L101-Sewage Network - SW** | 2026-10-27 → 2026-10-19 (-8d) | 2027-01-10 → 2027-08-01 (+203d) |  |  |  |
| 577 | **RHD4-02-002-L101-(SW)-MH Works - 1200 mm diameter** | 2026-11-03 → 2026-10-19 (-15d) | 2027-01-10 → 2027-08-01 (+203d) |  |  |  |
| RHD4CZ1L101SW3100 | Excavation and PC Blinding works for MH 1200 mm - (RD-L-10/1)-Z1-L101-SW | 2026-11-03 → 2026-10-19 A (-15d) | 2026-11-14 → 2027-06-05 (+203d) |  | 0% → 76% |  |
| RHD4CZ1L101SW3200 | Installation of Base for MH 1200 mm - (RD-L-10/1)-Z1-L101-SW | 2026-11-15 → 2027-06-06 (+203d) | 2026-11-30 → 2027-06-21 (+203d) |  |  |  |
| RHD4CZ1L101SW3300 | MH Ring and C.Slab works and Backfilling works for MH 1200 mm - (RD-L-10/1)-Z1-L101-SW | 2026-12-01 → 2027-06-22 (+203d) | 2026-12-16 → 2027-07-07 (+203d) |  |  |  |
| RHD4CZ1L101SW3400 | Steel Cover for MH 1200 mm - (RD-L-10/1)-Z1-L101-SW | 2026-12-17 → 2027-07-08 (+203d) | 2026-12-24 → 2027-07-15 (+203d) |  |  |  |
| RHD4CZ1L101SW3500 | Finishing, Benching, Testing works for MH 1200 mm - (RD-L-10/1)-Z1-L101-SW | 2026-12-26 → 2027-07-17 (+203d) | 2027-01-10 → 2027-08-01 (+203d) |  |  |  |
| 573 | **RHD4-02-002-L101-(SW)-UPVC Pipes - 200 mm diameter** |  | 2026-11-29 → 2027-06-29 (+212d) |  |  |  |
| RHD4CZ1L101SW2100 | Excavation works for UPVC Pipe Line 200 mm - (RD-L-10/1)-Z1-L101-SW | 2026-10-27 A | 2026-11-02 → 2027-05-30 (+209d) |  | 0% → 80% |  |
| RHD4CZ1L101SW2200 | Bedding works for UPVC Pipe Line 200 mm - (RD-L-10/1)-Z1-L101-SW | 2026-11-03 → 2026-10-29 A (-5d) | 2026-11-09 → 2027-06-06 (+209d) |  | 0% → 46% |  |
| RHD4CZ1L101SW2300 | Installing for UPVC Pipe Line 200 mm - (RD-L-10/1)-Z1-L101-SW | 2026-11-10 → 2026-10-31 A (-10d) | 2026-11-17 → 2027-06-14 (+209d) |  | 0% → 46% |  |
| RHD4CZ1L101SW2400 | Primary Test for UPVC Pipe Line 200 mm - (RD-L-10/1)-Z1-L101-SW | 2026-11-18 → 2027-06-19 (+213d) | 2026-11-22 → 2027-06-22 (+212d) |  |  |  |
| RHD4CZ1L101SW2500 | Backfilling and warning tape works for UPVC Pipe Line 200 mm - (RD-L-10/1)-Z1-L101-SW | 2026-11-23 → 2027-06-23 (+212d) | 2026-11-29 → 2027-06-29 (+212d) |  |  |  |
| 604 | **RHD4-02-002-Z1-L101-Potable Network - PT** | 2026-11-30 → 2027-06-30 (+212d) | 2027-01-03 → 2027-08-03 (+212d) |  |  |  |
| 606 | **RHD4-02-002-L101-(PT)-HDPE Pipes - 160 mm diameter** | 2026-11-30 → 2027-06-30 (+212d) | 2026-12-22 → 2027-07-22 (+212d) |  |  |  |
| RHD4CZ1L101PT1101 | Excavation works for HDPE Pipline 160 mm - (RD-L-10/1)-Z1-L101-PT | 2026-11-30 → 2027-06-30 (+212d) | 2026-12-03 → 2027-07-04 (+213d) |  |  |  |
| RHD4CZ1L101PT1201 | Bedding works for HDPE Pipline 160 mm - (RD-L-10/1)-Z1-L101-PT | 2026-12-05 → 2027-07-05 (+212d) | 2026-12-07 → 2027-07-07 (+212d) |  |  |  |
| RHD4CZ1L101PT1301 | Installing for HDPE Pipline 160 mm - (RD-L-10/1)-Z1-L101-PT | 2026-12-08 → 2027-07-08 (+212d) | 2026-12-14 → 2027-07-14 (+212d) |  |  |  |
| RHD4CZ1L101PT1401 | Primary Test for HDPE Pipline 160 mm - (RD-L-10/1)-Z1-L101-PT | 2026-12-15 → 2027-07-15 (+212d) | 2026-12-16 → 2027-07-17 (+213d) |  |  |  |
| RHD4CZ1L101PT1501 | Backfilling and warning tape works for HDPE Pipline 160 mm - (RD-L-10/1)-Z1-L101-PT | 2026-12-17 → 2027-07-18 (+213d) | 2026-12-22 → 2027-07-22 (+212d) |  |  |  |
| 605 | **RHD4-02-002-L101-(PT)-HDPE Pipes - 110 mm diameter** | 2026-11-30 → 2027-06-30 (+212d) | 2026-12-24 → 2027-07-25 (+213d) |  |  |  |
| RHD4CZ1L101PT1100 | Excavation works for HDPE Pipline 110 mm - (RD-L-10/1)-Z1-L101-PT | 2026-11-30 → 2027-06-30 (+212d) | 2026-12-01 → 2027-07-01 (+212d) |  |  |  |
| RHD4CZ1L101PT1200 | Bedding works for HDPE Pipline 110 mm - (RD-L-10/1)-Z1-L101-PT | 2026-12-08 → 2027-07-08 (+212d) | 2026-12-09 → 2027-07-10 (+213d) |  |  |  |
| RHD4CZ1L101PT1300 | Installing for HDPE Pipline 110 mm - (RD-L-10/1)-Z1-L101-PT | 2026-12-15 → 2027-07-15 (+212d) | 2026-12-16 → 2027-07-17 (+213d) |  |  |  |
| RHD4CZ1L101PT1400 | Primary Test for HDPE Pipline 110 mm - (RD-L-10/1)-Z1-L101-PT | 2026-12-17 → 2027-07-18 (+213d) | 2026-12-19 → 2027-07-19 (+212d) |  |  |  |

| ID | Task | Start | Finish | Other |
| --- | --- | --- | --- | --- |
| RHD4CZ1L101PT1500 | Backfilling and warning tape works for HDPE Pipline 110 mm - (RD-L-10/1)-Z1-L101-PT | 2026-12-23 → 2027-07-24 (+213d) | 2026-12-24 → 2027-07-25 (+213d) |  |
| 421 | **RHD4-02-002-L101-(PT)-Gate Valves (Direct Buried)** | 2026-12-26 → 2027-07-26 (+212d) | 2027-01-03 → 2027-08-03 (+212d) |  |
| RHD4CZ1L101PT3100 | Installation for Direct Buried Gate Valves - (RD-L-10/1)-Z1-L101-PT | 2026-12-26 → 2027-07-26 (+212d) | 2026-12-29 → 2027-07-29 (+212d) |  |
| RHD4CZ1L101PT3200 | Stem and Service box for Direct Buried Gate Valves - (RD-L-10/1)-Z1-L101-PT | 2026-12-30 → 2027-07-31 (+213d) | 2027-01-03 → 2027-08-03 (+212d) |  |
| 428 | **RHD4-02-002-L101-(PT)-Fire Hydrant** | 2026-11-30 → 2027-06-30 (+212d) | 2026-12-23 → 2027-07-24 (+213d) |  |
| RHD4CZ1L101PT4100 | Excavation and Bedding and Pipe Installation for Fire Hydrant - (RD-L-10/1)-Z1-L101-PT | 2026-11-30 → 2027-06-30 (+212d) | 2026-12-06 → 2027-07-06 (+212d) |  |
| RHD4CZ1L101PT4200 | Valve Installation for Fire Hydrant - (RD-L-10/1)-Z1-L101-PT | 2026-12-07 → 2027-07-07 (+212d) | 2026-12-10 → 2027-07-11 (+213d) | resources Unskilled Labor [39.97 h]; Plumber [39.97 h]; 3-outlet fire hydrant (2 x 2.5 inch and 1 x 4.5 inch) in the form of a separate dry vacuum cylinder [2.2 nr] → Unskilled Labor [40 h]; Plumber [40 h]; 3-outlet fire hydrant (2 x 2.5 inch and 1 x 4.5 inch) in the form of a separate dry vacuum cylinder [2.2 nr] |
| RHD4CZ1L101PT4300 | Stem for Fire Hydrant - (RD-L-10/1)-Z1-L101-PT | 2026-12-12 → 2027-07-12 (+212d) | 2026-12-15 → 2027-07-15 (+212d) | resources Unskilled Labor [39.97 h]; Plumber [39.97 h]; 3-outlet fire hydrant (2 x 2.5 inch and 1 x 4.5 inch) in the form of a separate dry vacuum cylinder [3.3 nr] → Unskilled Labor [40 h]; Plumber [40 h]; 3-outlet fire hydrant (2 x 2.5 inch and 1 x 4.5 inch) in the form of a separate dry vacuum cylinder [3.3 nr] |
| RHD4CZ1L101PT4400 | Fire Installation for Fire Hydrant - (RD-L-10/1)-Z1-L101-PT | 2026-12-16 → 2027-07-17 (+213d) | 2026-12-20 → 2027-07-20 (+212d) | resources Unskilled Labor [39.97 h]; Plumber [39.97 h]; Equipment Opreator [39.97 h]; Boom Truck [39.97 h]; 3-outlet fire hydrant (2 x 2.5 inch and 1 x 4.5 inch) in the form of a separate dry vacuum cylinder [3.85 nr] → Unskilled Labor [40 h]; Plumber [40 h]; Equipment Opreator [40 h]; Boom Truck [40 h]; 3-outlet fire hydrant (2 x 2.5 inch and 1 x 4.5 inch) in the form of a separate dry vacuum cylinder [3.85 nr] |
| RHD4CZ1L101PT4500 | Protection Barriers for Fire Hydrant - (RD-L-10/1)-Z1-L101-PT | 2026-12-21 → 2027-07-21 (+212d) | 2026-12-23 → 2027-07-24 (+213d) |  |
| 619 | **RHD4-02-002-Z1-L101-Irrigation Network - IRR** | 2027-01-04 → 2027-08-04 (+212d) | 2027-02-06 → 2027-09-06 (+212d) |  |
| 6107 | **RHD4-02-002-L101-(IRR)-HDPE Pipes - 160 mm diameter** | 2027-01-11 → 2027-08-11 (+212d) | 2027-01-24 → 2027-08-24 (+212d) |  |
| RHD4CZ1L101IRR1100 | Excavation works for HDPE Pipline 160 mm - (RD-L-10/1)-Z1-L101-IRR | 2027-01-11 → 2027-08-11 (+212d) | 2027-01-13 → 2027-08-14 (+213d) |  |
| RHD4CZ1L101IRR1200 | Bedding works for HDPE Pipline 160 mm - (RD-L-10/1)-Z1-L101-IRR | 2027-01-14 → 2027-08-15 (+213d) | 2027-01-16 → 2027-08-16 (+212d) |  |
| RHD4CZ1L101IRR1300 | Installing for HDPE Pipline 160 mm - (RD-L-10/1)-Z1-L101-IRR | 2027-01-17 → 2027-08-17 (+212d) | 2027-01-19 → 2027-08-19 (+212d) | resources Unskilled Labor [48.79 h]; Plumber [24.39 h]; Equipment Opreator [24.39 h]; Boom Truck [24.39 h]; HDPE (160mm Diameter) - TSE - Depth: less than 1.5m [151.2 m] → Unskilled Labor [48.8 h]; Plumber [24.39 h]; Equipment Opreator [24.39 h]; Boom Truck [24.39 h]; HDPE (160mm Diameter) - TSE - Depth: less than 1.5m [151.2 m] |
| RHD4CZ1L101IRR1400 | Primary Test for HDPE Pipline 160 mm - (RD-L-10/1)-Z1-L101-IRR | 2027-01-20 → 2027-08-21 (+213d) | 2027-01-21 → 2027-08-22 (+213d) |  |
| RHD4CZ1L101IRR1500 | Backfilling and warning tape works for HDPE Pipline 160 mm - (RD-L-10/1)-Z1-L101-IRR | 2027-01-23 → 2027-08-23 (+212d) | 2027-01-24 → 2027-08-24 (+212d) |  |
| 6116 | **RHD4-02-002-L101-(IRR)-Butterfly Valve Chamber** | 2027-01-14 → 2027-08-15 (+213d) | 2027-01-23 → 2027-08-23 (+212d) |  |
| RHD4CZ1L101IRR2100 | Excavation and Bedding for Butterfly Valve Chamber for Irrigation Network - (RD-L-10/1)-Z1-L101-IRR | 2027-01-14 → 2027-08-15 (+213d) | 2027-01-16 → 2027-08-16 (+212d) |  |
| RHD4CZ1L101IRR2200 | PC works for Butterfly Valve Chamber for Irrigation Network - (RD-L-10/1)-Z1-L101-IRR | 2027-01-17 → 2027-08-17 (+212d) | 2027-01-18 → 2027-08-18 (+212d) |  |
| RHD4CZ1L101IRR2300 | Installation for Butterfly Valve Chamber for Irrigation Network - (RD-L-10/1)-Z1-L101-IRR | 2027-01-19 → 2027-08-19 (+212d) | 2027-01-20 → 2027-08-21 (+213d) |  |
| RHD4CZ1L101IRR2400 | Backfilling works for Butterfly Valve Chamber for Irrigation Network - (RD-L-10/1)-Z1-L101-IRR | 2027-01-21 → 2027-08-22 (+213d) | 2027-01-23 → 2027-08-23 (+212d) |  |
| 6117 | **RHD4-02-002-L101-(IRR)-Butterfly Valves** | 2027-01-21 → 2027-08-22 (+213d) | 2027-01-25 → 2027-08-25 (+212d) |  |
| RHD4CZ1L101IRR3101 | Installation for Butterfly Valves for Irrigation Network - (RD-L-10/1)-Z1-L101-IRR | 2027-01-21 → 2027-08-22 (+213d) | 2027-01-23 → 2027-08-23 (+212d) |  |
| RHD4CZ1L101IRR3201 | Stem and Service box for Butterfly Valves for Irrigation Network - (RD-L-10/1)-Z1-L101-IRR | 2027-01-24 → 2027-08-24 (+212d) | 2027-01-25 → 2027-08-25 (+212d) |  |
| 624 | **RHD4-02-002-L101-(IRR)-HDPE Pipes - 315 mm diameter** | 2027-01-04 → 2027-08-04 (+212d) | 2027-01-31 → 2027-08-31 (+212d) |  |
| RHD4CZ1L101IRR1104 | Excavation works for HDPE Pipline 315 mm - (RD-L-10/1)-Z1-L101-IRR | 2027-01-04 → 2027-08-04 (+212d) | 2027-01-10 → 2027-08-10 (+212d) | resources Skilled labor [63.93 h]; Unskilled Labor [63.93 h]; Equipment Opreator [76.78 h]; Excavator-Poclain [63.93 h]; Dump Truck [12.74 h]; HDPE (315mm Diameter) - TSE - Depth: less than 1.5m [86.06 m]; HDPE (315mm Diameter) - TSE - Depth: more than 1.51m [3.07 m] → Skilled labor [63.93 h]; Unskilled Labor [63.93 h]; Equipment Opreator [76.8 h]; Excavator-Poclain [63.93 h]; Dump Truck [12.74 h]; HDPE (315mm Diameter) - TSE - Depth: less than 1.5m [86.06 m]; HDPE (315mm Diameter) - TSE - Depth: more than 1.51m [3.07 m] |
| RHD4CZ1L101IRR1204 | Bedding works for HDPE Pipline 315 mm - (RD-L-10/1)-Z1-L101-IRR | 2027-01-11 → 2027-08-11 (+212d) | 2027-01-16 → 2027-08-16 (+212d) |  |
| RHD4CZ1L101IRR1304 | Installing for HDPE Pipline 315 mm - (RD-L-10/1)-Z1-L101-IRR | 2027-01-17 → 2027-08-17 (+212d) | 2027-01-23 → 2027-08-23 (+212d) | resources Unskilled Labor [127.96 h]; Plumber [63.93 h]; Equipment Opreator [63.93 h]; Boom Truck [63.93 h]; HDPE (315mm Diameter) - TSE - Depth: less than 1.5m [387.26 m]; HDPE (315mm Diameter) - TSE - Depth: more than 1.51m [8.2 m] → Unskilled Labor [128 h]; Plumber [63.93 h]; Equipment Opreator [63.93 h]; Boom Truck [63.93 h]; HDPE (315mm Diameter) - TSE - Depth: less than 1.5m [387.26 m]; HDPE (315mm Diameter) - TSE - Depth: more than 1.51m [8.2 m] |
| RHD4CZ1L101IRR1404 | Primary Test for HDPE Pipline 315 mm - (RD-L-10/1)-Z1-L101-IRR | 2027-01-24 → 2027-08-24 (+212d) | 2027-01-25 → 2027-08-25 (+212d) |  |
| RHD4CZ1L101IRR1504 | Backfilling and warning tape works for HDPE Pipline 315 mm - (RD-L-10/1)-Z1-L101-IRR | 2027-01-26 → 2027-08-26 (+212d) | 2027-01-31 → 2027-08-31 (+212d) |  |
| 628 | **RHD4-02-002-L101-(IRR)-Gate Valves (Direct Buried)** | 2027-01-24 → 2027-08-24 (+212d) | 2027-02-06 → 2027-09-06 (+212d) |  |
| RHD4CZ1L101IRR3100 | Installation for Direct Buried Gate Valves - (RD-L-10/1)-Z1-L101-IRR | 2027-01-24 → 2027-08-24 (+212d) | 2027-01-30 → 2027-08-30 (+212d) |  |
| RHD4CZ1L101IRR3200 | Stem and Service box for Direct Buried Gate Valves - (RD-L-10/1)-Z1-L101-IRR | 2027-01-31 → 2027-08-31 (+212d) | 2027-02-06 → 2027-09-06 (+212d) |  |
| 653 | **RHD4-02-002-Z1-L101-Medium Voltage Network - MV** | 2026-12-01 → 2027-05-13 (+163d) | 2027-01-09 → 2027-06-26 (+168d) |  |
| 654 | **RHD4-02-002-L101-(MV)-Medium Voltage cable trench** | 2026-12-01 → 2027-05-13 (+163d) | 2026-12-30 → 2027-06-16 (+168d) |  |
| RHD4CZ1L101MV1100 | Excavation for Medium Voltage Trench - (RD-L-10/1)-Z1-L101-MV | 2026-12-01 → 2027-05-13 (+163d) | 2026-12-15 → 2027-06-01 (+168d) |  |
| RHD4CZ1L101MV1200 | Trench Backfilling for Medium Voltage Network - (RD-L-10/1)-Z1-L101-MV | 2026-12-16 → 2027-06-02 (+168d) | 2026-12-30 → 2027-06-16 (+168d) |  |
| 656 | **RHD4-02-002-L101-(MV)-Medium Voltage cables 3Cx 500 mm²** | 2026-12-16 → 2027-06-02 (+168d) | 2027-01-06 → 2027-06-23 (+168d) |  |
| RHD4CZ1L101MV3100 | Installation of Medium Voltage Cables 3Cx 500 mm² - (RD-L-10/1)-Z1-L101-MV | 2026-12-16 → 2027-06-02 (+168d) | 2026-12-22 → 2027-06-08 (+168d) |  |
| RHD4CZ1L101MV3200 | Joints Installation of Medium Voltage Cables 3Cx 500 mm² - (RD-L-10/1)-Z1-L101-MV | 2026-12-23 → 2027-06-09 (+168d) | 2026-12-24 → 2027-06-10 (+168d) |  |
| RHD4CZ1L101MV3300 | Testing of Medium Voltage Cables 3Cx 500 mm² - (RD-L-10/1)-Z1-L101-MV | 2026-12-31 → 2027-06-17 (+168d) | 2027-01-06 → 2027-06-23 (+168d) |  |
| 5387 | **RHD4-02-002-C062-(MV)-Medium Voltage cables 3Cx 50 mm²** | 2027-01-07 → 2027-06-24 (+168d) | 2027-01-09 → 2027-06-26 (+168d) |  |
| RHD4CZ1L101MV3401 | Termination of Medium Voltage Cables 3Cx 50 mm² - (RD-L-10/1)-Z1-L101-MV | 2027-01-07 → 2027-06-24 (+168d) | 2027-01-09 → 2027-06-26 (+168d) |  |
| 660 | **RHD4-02-002-Z1-L101-Low Voltage Network - LV** | 2027-02-01 → 2027-09-01 (+212d) | 2027-03-13 → 2027-10-07 (+208d) |  |
| 661 | **RHD4-02-002-L101-(LV)-Low Voltage duct banks** | 2027-02-01 → 2027-09-01 (+212d) | 2027-02-09 → 2027-09-09 (+212d) |  |
| RHD4CZ1L101LV2100 | Excavation of Duct Banks for Low Voltage Network - (RD-L-10/1)-Z1-L101-LV | 2027-02-01 → 2027-09-01 (+212d) | 2027-02-02 → 2027-09-02 (+212d) |  |
| RHD4CZ1L101LV2200 | Installation of Duct Banks for Low Voltage Network - (RD-L-10/1)-Z1-L101-LV | 2027-02-03 → 2027-09-04 (+213d) | 2027-02-04 → 2027-09-05 (+213d) |  |
| RHD4CZ1L101LV2300 | Pouring of Duct Banks for Low Voltage Network - (RD-L-10/1)-Z1-L101-LV | 2027-02-06 → 2027-09-06 (+212d) | 2027-02-07 → 2027-09-07 (+212d) |  |
| RHD4CZ1L101LV2400 | Backfilling of Duct Banks for Low Voltage Network - (RD-L-10/1)-Z1-L101-LV | 2027-02-08 → 2027-09-08 (+212d) | 2027-02-09 → 2027-09-09 (+212d) |  |
| 662 | **RHD4-02-002-L101-(LV)-Low Voltage Drawpit** | 2027-02-08 → 2027-09-08 (+212d) | 2027-02-11 → 2027-09-12 (+213d) |  |
| RHD4CZ1L101LV5100 | Excavation of Drawpit size 900x900x1000mm for Low Voltage Network - (RD-L-10/1)-Z1-L101-LV | 2027-02-08 → 2027-09-08 (+212d) | 2027-02-09 → 2027-09-09 (+212d) | resources Skilled labor [0.87 h]; Unskilled Labor [0.87 h]; Equipment Opreator [0.76 h]; Excavator-Poclain [0.33 h]; Dump Truck [0.33 h]; Drawpit with medium duty steel cover, size900x900x1000mm, [0.15 Unit] → Skilled labor [0.87 h]; Unskilled Labor [0.87 h]; Equipment Opreator [0.8 h]; Excavator-Poclain [0.33 h]; Dump Truck [0.33 h]; Drawpit with medium duty steel cover, size900x900x1000mm, [0.15 Unit] |
| RHD4CZ1L101LV5200 | Installation of Drawpit size 900x900x1000mm for Low Voltage Network - (RD-L-10/1)-Z1-L101-LV | 2027-02-10 → 2027-09-11 (+213d) | 2027-02-11 → 2027-09-12 (+213d) |  |
| 663 | **RHD4-02-002-L101-(LV)-Low Voltage cables** | 2027-02-10 → 2027-09-11 (+213d) | 2027-03-13 → 2027-10-07 (+208d) |  |
| RHD4CZ1L101LV3100 | Excavation for Low Voltage Cables for Low Voltage Network - (RD-L-10/1)-Z1-L101-LV | 2027-02-10 → 2027-09-11 (+213d) | 2027-02-17 → 2027-09-18 (+213d) |  |
| RHD4CZ1L101LV3200 | Cable Laying of Low Voltage Cables for Low Voltage Network - (RD-L-10/1)-Z1-L101-LV | 2027-02-18 → 2027-09-19 (+213d) | 2027-02-25 → 2027-09-26 (+213d) |  |
| RHD4CZ1L101LV3300 | Warning tape and Backfill for Low Voltage Cables for Low Voltage Network - (RD-L-10/1)-Z1-L101-LV | 2027-02-27 → 2027-09-27 (+212d) | 2027-03-04 → 2027-10-03 (+213d) |  |
| RHD4CZ1L101LV3400 | Testing of Low Voltage Cables for Low Voltage Network - (RD-L-10/1)-Z1-L101-LV | 2027-03-06 → 2027-10-04 (+212d) | 2027-03-13 → 2027-10-07 (+208d) |  |
| 666 | **RHD4-02-002-Z1-L101-Street Lighting Network - SL** | 2027-02-01 → 2027-09-01 (+212d) | 2027-04-10 → 2027-11-04 (+208d) |  |
| 667 | **RHD4-02-002-L101-(SL)-Street Lighting duct banks** | 2027-02-01 → 2027-09-01 (+212d) | 2027-02-11 → 2027-09-12 (+213d) |  |
| RHD4CZ1L101SL2100 | Excavation of Duct Banks for Street Lighting Network - (RD-L-10/1)-Z1-L101-SL | 2027-02-01 → 2027-09-01 (+212d) | 2027-02-02 → 2027-09-02 (+212d) |  |
| RHD4CZ1L101SL2200 | Installation of Duct Banks for Street Lighting Network - (RD-L-10/1)-Z1-L101-SL | 2027-02-06 → 2027-09-06 (+212d) | 2027-02-07 → 2027-09-07 (+212d) |  |
| RHD4CZ1L101SL2300 | Pouring of Duct Banks for Street Lighting Network - (RD-L-10/1)-Z1-L101-SL | 2027-02-08 → 2027-09-08 (+212d) | 2027-02-09 → 2027-09-09 (+212d) |  |
| RHD4CZ1L101SL2400 | Backfilling of Duct Banks for Street Lighting Network - (RD-L-10/1)-Z1-L101-SL | 2027-02-10 → 2027-09-11 (+213d) | 2027-02-11 → 2027-09-12 (+213d) | resources Skilled labor [8.82 h]; Unskilled Labor [8.82 h]; Equipment Opreator [3.48 h]; Excavator-Poclain [3.48 h]; Road Crossing Duct for Street Lighting cables UPVC (2x?110mm) [2.44 m] → Skilled labor [8.8 h]; Unskilled Labor [8.8 h]; Equipment Opreator [3.48 h]; Excavator-Poclain [3.48 h]; Road Crossing Duct for Street Lighting cables UPVC (2x?110mm) [2.44 m] |
| 668 | **RHD4-02-002-L101-(SL)-Street Lighting Drawpit** | 2027-02-13 → 2027-09-13 (+212d) | 2027-02-16 → 2027-09-16 (+212d) |  |
| RHD4CZ1L101SL5100 | Excavation of Drawpit size 600x600x900mm for Street Lighting Network - (RD-L-10/1)-Z1-L101-SL | 2027-02-13 → 2027-09-13 (+212d) | 2027-02-14 → 2027-09-14 (+212d) | resources Skilled labor [1.85 h]; Unskilled Labor [1.85 h]; Equipment Opreator [1.42 h]; Excavator-Poclain [0.76 h]; Dump Truck [0.76 h]; Drawpit with medium duty steel cover, size600x600x900mm, [0.3 Unit] → Skilled labor [1.85 h]; Unskilled Labor [1.85 h]; Equipment Opreator [1.42 h]; Excavator-Poclain [0.8 h]; Dump Truck [0.8 h]; Drawpit with medium duty steel cover, size600x600x900mm, [0.3 Unit] |
| RHD4CZ1L101SL5200 | Installation of Drawpit size 600x600x900mm for Street Lighting Network - (RD-L-10/1)-Z1-L101-SL | 2027-02-15 → 2027-09-15 (+212d) | 2027-02-16 → 2027-09-16 (+212d) | resources Skilled labor [1.85 h]; Unskilled Labor [1.85 h]; Equipment Opreator [0.76 h]; Boom Truck [0.76 h]; Drawpit with medium duty steel cover, size600x600x900mm, [1.7 Unit] → Skilled labor [1.85 h]; Unskilled Labor [1.85 h]; Equipment Opreator [0.8 h]; Boom Truck [0.8 h]; Drawpit with medium duty steel cover, size600x600x900mm, [1.7 Unit] |
| 669 | **RHD4-02-002-L101-(SL)-Street Lighting cables** | 2027-02-28 → 2027-09-28 (+212d) | 2027-03-29 → 2027-10-24 (+209d) |  |
| RHD4CZ1L101SL3100 | Excavation for Street Lighting Cables for Street Lighting Network - (RD-L-10/1)-Z1-L101-SL | 2027-02-28 → 2027-09-28 (+212d) | 2027-03-07 → 2027-10-05 (+212d) |  |
| RHD4CZ1L101SL3200 | Cable Laying of Street Lighting Cables for Street Lighting Network - (RD-L-10/1)-Z1-L101-SL | 2027-03-08 → 2027-10-06 (+212d) | 2027-03-17 → 2027-10-12 (+209d) |  |

| ID | Task | Start | Finish | Duration | Other |
| --- | --- | --- | --- | --- | --- |
| RHD4CZ1L101SL3300 | Warning tape and Backfill for Street Lighting Cables for Street Lighting Network - (RD-L-10/1)-Z1-L101-SL | 2027-03-18 → 2027-10-13 (+209d) | 2027-03-24 → 2027-10-19 (+209d) |  |  |
| RHD4CZ1L101SL3400 | Testing of Street Lighting Cables for Street Lighting Network - (RD-L-10/1)-Z1-L101-SL | 2027-03-25 → 2027-10-20 (+209d) | 2027-03-29 → 2027-10-24 (+209d) |  |  |
| 670 | **RHD4-02-002-L101-(SL)-Street Lighting Poles** | 2027-02-13 → 2027-09-13 (+212d) | 2027-04-10 → 2027-11-04 (+208d) |  |  |
| RHD4CZ1L101SL1100 | Excavation for RC Base for Lighting Poles for Street Lighting Network - (RD-L-10/1)-Z1-L101-SL | 2027-02-13 → 2027-09-13 (+212d) | 2027-02-16 → 2027-09-16 (+212d) |  |  |
| RHD4CZ1L101SL1200 | Installation for RC Base for Lighting Poles for Street Lighting Network - (RD-L-10/1)-Z1-L101-SL | 2027-02-17 → 2027-09-18 (+213d) | 2027-02-21 → 2027-09-21 (+212d) |  |  |
| RHD4CZ1L101SL1300 | Backfill for RC Base for Lighting Poles for Street Lighting Network - (RD-L-10/1)-Z1-L101-SL | 2027-02-23 → 2027-09-22 (+211d) | 2027-02-27 → 2027-09-27 (+212d) |  |  |
| RHD4CZ1L101SL1400 | Installation for Lighting Poles for Street Lighting Network - (RD-L-10/1)-Z1-L101-SL | 2027-03-30 → 2027-10-25 (+209d) | 2027-04-05 → 2027-10-31 (+209d) |  |  |
| RHD4CZ1L101SL1500 | Luminaire Installation for Lighting Poles for Street Lighting Network - (RD-L-10/1)-Z1-L101-SL | 2027-04-06 → 2027-11-01 (+209d) | 2027-04-10 → 2027-11-04 (+208d) |  |  |
| 672 | **RHD4-02-002-L101-(SL)-Street Lighting Earthing System** | 2027-04-06 → 2027-11-01 (+209d) | 2027-04-07 → 2027-11-02 (+209d) |  |  |
| RHD4CZ1L101SL6100 | Installation of Earthing for Lighting Poles and Fedder Pillers for Street Lighting Network - (RD-L-10/1)-Z1-L101-SL | 2027-04-06 → 2027-11-01 (+209d) | 2027-04-07 → 2027-11-02 (+209d) |  |  |
| 678 | **RHD4-02-002-Z1-L101-Telecommunications Network - TC** | 2027-04-08 → 2027-11-03 (+209d) | 2027-05-27 → 2027-12-18 (+205d) |  |  |
| 679 | **RHD4-02-002-L101-(TC)-Telecommunications Ducts** | 2027-04-08 → 2027-11-03 (+209d) | 2027-05-27 → 2027-12-18 (+205d) |  |  |
| RHD4CZ1L101TC2100 | Excavation of HDPE Ducts for Telecom Network - (RD-L-10/1)-Z1-L101-TC | 2027-04-08 → 2027-11-03 (+209d) | 2027-04-20 → 2027-11-15 (+209d) |  |  |
| RHD4CZ1L101TC2200 | Installation of HDPE Ducts for Telecom Network - (RD-L-10/1)-Z1-L101-TC | 2027-04-21 → 2027-11-16 (+209d) | 2027-05-10 → 2027-12-05 (+209d) |  |  |
| RHD4CZ1L101TC2400 | Backfilling of HDPE Ducts for Telecom Network - (RD-L-10/1)-Z1-L101-TC | 2027-05-11 → 2027-12-06 (+209d) | 2027-05-27 → 2027-12-18 (+205d) |  |  |
| 680 | **RHD4-02-002-L101-(TC)-Telecommunications Manholes** | 2027-04-21 → 2027-11-16 (+209d) | 2027-05-02 → 2027-11-27 (+209d) |  |  |
| RHD4CZ1L101TC5100 | Excavation for Manholes for Telecom Network - (RD-L-10/1)-Z1-L101-TC | 2027-04-21 → 2027-11-16 (+209d) | 2027-04-26 → 2027-11-21 (+209d) |  | resources Skilled labor [13.61 h]; Unskilled Labor [13.61 h]; Equipment Opreator [10.89 h]; Excavator-Poclain [5.45 h]; Dump Truck [5.45 h]; Manhole Type 1 - TC [1.2 nr]; Manhole Type 2 - TC [0.15 nr] → Skilled labor [13.6 h]; Unskilled Labor [13.6 h]; Equipment Opreator [10.89 h]; Excavator-Poclain [5.45 h]; Dump Truck [5.45 h]; Manhole Type 1 - TC [1.2 nr]; Manhole Type 2 - TC [0.15 nr] |
| RHD4CZ1L101TC5200 | Installation of Manholes for Telecom Network - (RD-L-10/1)-Z1-L101-TC | 2027-04-27 → 2027-11-22 (+209d) | 2027-05-02 → 2027-11-27 (+209d) |  | resources Skilled labor [13.61 h]; Unskilled Labor [13.61 h]; Equipment Opreator [5.45 h]; Boom Truck [5.45 h]; Manhole Type 1 - TC [6.8 nr]; Manhole Type 2 - TC [0.85 nr] → Skilled labor [13.6 h]; Unskilled Labor [13.6 h]; Equipment Opreator [5.45 h]; Boom Truck [5.45 h]; Manhole Type 1 - TC [6.8 nr]; Manhole Type 2 - TC [0.85 nr] |
| 682 | **RHD4-02-002-Z1-L101-Information and Communication Technologies - ICT** | 2026-09-03 → 2027-03-28 (+206d) | 2027-05-12 → 2027-12-07 (+209d) |  |  |
| 683 | **RHD4-02-002-L101-(ICT)-Information and Communication Technologies Ducts** | 2027-03-30 → 2027-10-25 (+209d) | 2027-05-12 → 2027-12-07 (+209d) |  |  |
| RHD4CZ1L101ICT2100 | Excavation of HDPE Ducts for ICT Network - (RD-L-10/1)-Z1-L101-ICT | 2027-03-30 → 2027-10-25 (+209d) | 2027-04-11 → 2027-11-06 (+209d) |  |  |
| RHD4CZ1L101ICT2200 | Installation of HDPE Ducts for ICT Network - (RD-L-10/1)-Z1-L101-ICT | 2027-04-12 → 2027-11-07 (+209d) | 2027-04-29 → 2027-11-24 (+209d) |  |  |
| RHD4CZ1L101ICT2400 | Backfilling of HDPE Ducts for ICT Network - (RD-L-10/1)-Z1-L101-ICT | 2027-05-01 → 2027-11-25 (+208d) | 2027-05-12 → 2027-12-07 (+209d) |  |  |
| 684 | **RHD4-02-002-L101-(ICT)-Information and Communication Technologies Manholes** | 2027-04-12 → 2027-11-07 (+209d) | 2027-04-22 → 2027-11-17 (+209d) |  |  |
| RHD4CZ1L101ICT5100 | Excavation for Manholes for ICT Network - (RD-L-10/1)-Z1-L101-ICT | 2027-04-12 → 2027-11-07 (+209d) | 2027-04-17 → 2027-11-11 (+208d) |  |  |
| RHD4CZ1L101ICT5200 | Installation of Manholes for ICT Network - (RD-L-10/1)-Z1-L101-ICT | 2027-04-18 → 2027-11-13 (+209d) | 2027-04-22 → 2027-11-17 (+209d) |  |  |
| 685 | **RHD4-02-002-L101-(ICT)-Information and Communication Technologies Road Crossings** | 2026-09-03 → 2027-03-28 (+206d) | 2026-09-12 → 2027-04-05 (+205d) |  |  |
| RHD4CZ1L101ICT3100 | Excavation for Road Crossings for ICT Network - (RD-L-10/1)-Z1-L101-ICT | 2026-09-03 → 2027-03-28 (+206d) | 2026-09-05 → 2027-03-29 (+205d) |  |  |
| RHD4CZ1L101ICT3200 | Installation of Road Crossings for ICT Network - (RD-L-10/1)-Z1-L101-ICT | 2026-09-06 → 2027-03-30 (+205d) | 2026-09-07 → 2027-03-31 (+205d) |  |  |
| RHD4CZ1L101ICT3300 | Pouring of Road Crossings for ICT Network - (RD-L-10/1)-Z1-L101-ICT | 2026-09-08 → 2027-04-01 (+205d) | 2026-09-09 → 2027-04-03 (+206d) |  |  |
| RHD4CZ1L101ICT3400 | Backfilling of Road Crossings for ICT Network - (RD-L-10/1)-Z1-L101-ICT | 2026-09-10 → 2027-04-04 (+206d) | 2026-09-12 → 2027-04-05 (+205d) |  |  |
| 686 | **RHD4-02-002-Z1-L101-Security Network - CCTV** | 2027-05-29 → 2027-12-19 (+204d) | 2027-07-12 → 2028-02-01 (+204d) |  |  |
| 687 | **RHD4-02-002-L101-(CCTV)-Civil Works** | 2027-05-29 → 2027-12-19 (+204d) | 2027-06-08 → 2027-12-29 (+204d) |  |  |
| RHD4CZ1L101CCTV2100 | Civil Works for Security Network - (RD-L-10/1)-Z1-L101-CCTV | 2027-05-29 → 2027-12-19 (+204d) | 2027-06-08 → 2027-12-29 (+204d) |  |  |
| 688 | **RHD4-02-002-L101-(CCTV)-CCTV Poles** | 2027-06-09 → 2027-12-30 (+204d) | 2027-06-20 → 2028-01-10 (+204d) |  |  |
| RHD4CZ1L101CCTV1100 | Excavation for RC Base for CCTV Poles for Security Network - (RD-L-10/1)-Z1-L101-CCTV | 2027-06-09 → 2027-12-30 (+204d) | 2027-06-10 → 2028-01-01 (+205d) |  |  |
| RHD4CZ1L101CCTV1200 | Installation for RC Base for CCTV Poles for Security Network - (RD-L-10/1)-Z1-L101-CCTV | 2027-06-12 → 2028-01-02 (+204d) | 2027-06-13 → 2028-01-03 (+204d) |  |  |
| RHD4CZ1L101CCTV1300 | Backfill for RC Base for CCTV Poles for Security Network - (RD-L-10/1)-Z1-L101-CCTV | 2027-06-14 → 2028-01-04 (+204d) | 2027-06-15 → 2028-01-05 (+204d) |  |  |
| RHD4CZ1L101CCTV1400 | Installation for CCTV Poles for Security Network - (RD-L-10/1)-Z1-L101-CCTV | 2027-06-16 → 2028-01-06 (+204d) | 2027-06-17 → 2028-01-08 (+205d) |  |  |
| RHD4CZ1L101CCTV1500 | Protection post Installation for CCTV Poles for Security Network - (RD-L-10/1)-Z1-L101-CCTV | 2027-06-19 → 2028-01-09 (+204d) | 2027-06-20 → 2028-01-10 (+204d) |  |  |
| 689 | **RHD4-02-002-L101-(CCTV)-Camera** | 2027-06-23 → 2028-01-13 (+204d) | 2027-06-24 → 2028-01-15 (+205d) |  |  |
| RHD4CZ1L101CCTV3100 | Installation for Cameras for Security Network - (RD-L-10/1)-Z1-L101-CCTV | 2027-06-23 → 2028-01-13 (+204d) | 2027-06-24 → 2028-01-15 (+205d) |  |  |
| 690 | **RHD4-02-002-L101-(CCTV)-Power and Infrastructure** | 2027-06-19 → 2028-01-09 (+204d) | 2027-06-22 → 2028-01-12 (+204d) |  |  |
| RHD4CZ1L101CCTV4100 | Installation of Power outlet, UPS and midspan for PTZ Camerafor Cameras for Security Network - (RD-L-10/1)-Z1-L101-CCTV | 2027-06-19 → 2028-01-09 (+204d) | 2027-06-20 → 2028-01-10 (+204d) |  |  |
| RHD4CZ1L101CCTV4200 | Short Range Wireless PoP wireless Bridgefor CCTV Poles for Security Network - (RD-L-10/1)-Z1-L101-CCTV | 2027-06-21 → 2028-01-11 (+204d) | 2027-06-22 → 2028-01-12 (+204d) |  |  |
| 692 | **RHD4-02-002-L101-(CCTV)-CCTV Panels and Components** | 2027-06-26 → 2028-01-16 (+204d) | 2027-07-12 → 2028-02-01 (+204d) |  |  |
| RHD4CZ1L101CCTV6100 | Installation for CCTV Panels for Security Network - (RD-L-10/1)-Z1-L101-CCTV | 2027-06-26 → 2028-01-16 (+204d) | 2027-07-12 → 2028-02-01 (+204d) |  |  |
| 325 | **RHD4-02-002-Z1-C081** | 2026-08-23 → 2027-01-30 (+160d) | 2027-09-07 → 2028-04-03 (+209d) |  |  |
| 504 | **RHD4-02-002-Z1-C081-Road Works - RD** | 2026-09-13 → 2027-03-01 (+169d) | 2027-09-07 → 2028-04-03 (+209d) |  |  |
| 505 | **RHD4-02-002-C081-(RD)-Subgrade** | 2026-09-13 → 2027-03-01 (+169d) | 2026-09-19 → 2027-03-14 (+176d) |  |  |
| RHD4CZ1C081RD1100 | Supply, lay and compaction subgrade compacted thickness 300 mm for Roads - (RD-C-8 /1)-Z1-C081-RD | 2026-09-13 → 2027-03-01 (+169d) | 2026-09-19 → 2027-03-14 (+176d) | 6d → 9d | resources Skilled labor [98.01 h]; Unskilled Labor [196.03 h]; Electrician [98.01 h]; Equipment Opreator [669.43 h]; Water Truck [32.34 h]; Roller compactor [49.01 h]; Grader [98.01 h]; Dump Truck [490.07 h]; Subgrade [4714.03 m3] → Skilled labor [98.01 h]; Unskilled Labor [196 h]; Electrician [98.01 h]; Equipment Opreator [669.43 h]; Water Truck [32.34 h]; Roller compactor [49.01 h]; Grader [98.01 h]; Dump Truck [490.07 h]; Subgrade [4714.03 m3] |
| 506 | **RHD4-02-002-C081-(RD)-Aggregate Base Course** | 2026-09-20 → 2027-03-15 (+176d) | 2026-09-27 → 2027-03-22 (+176d) |  |  |
| RHD4CZ1C081RD2100 | Supply, lay and compaction Aggregate base course compacted thickness 300 mmfor Roads - (RD-C-8 /1)-Z1-C081-RD | 2026-09-20 → 2027-03-15 (+176d) | 2026-09-27 → 2027-03-22 (+176d) | 6d → 7d |  |
| 507 | **RHD4-02-002-C081-(RD)-Bituminous base course Two Layers, including (MC1)&(RC2)** | 2026-09-28 → 2027-03-23 (+176d) | 2027-06-24 → 2027-12-01 (+160d) |  |  |
| RHD4CZ1C081RD3100 | Supply, lay and Asphaltic base course including Prime Coat (MC1) for 1st Layer - (RD-C-8 /1)-Z1-C081-RD | 2026-09-28 → 2027-03-23 (+176d) | 2026-09-30 → 2027-03-25 (+176d) |  | resources Skilled labor [28.86 h]; Unskilled Labor [172.94 h]; Equipment Opreator [432.46 h]; Bobcat [28.86 h]; Roller compactor [28.86 h]; Asphalt Paver [28.86 h]; Rubber Compactor [57.61 h]; MC1/RC2 Sprinkler [28.86 h]; Dump Truck [259.41 h]; Bituminous base course (Grading I - Class A), including Prime coat (MC1) & tack coate (RC2) [1054.68 m3] → Skilled labor [28.86 h]; Unskilled Labor [172.94 h]; Equipment Opreator [432.46 h]; Bobcat [28.86 h]; Roller compactor [28.86 h]; Asphalt Paver [28.86 h]; Rubber Compactor [57.6 h]; MC1/RC2 Sprinkler [28.86 h]; Dump Truck [259.41 h]; Bituminous base course (Grading I - Class A), including Prime coat (MC1) & tack coate (RC2) [1054.68 m3] |
| RHD4CZ1C081RD3200 | Supply, lay and Asphaltic base course including Tack Coat (RC2) for 2nd Layer - (RD-C-8 /1)-Z1-C081-RD | 2027-06-22 → 2027-11-29 (+160d) | 2027-06-24 → 2027-12-01 (+160d) |  | resources Skilled labor [28.86 h]; Unskilled Labor [172.94 h]; Equipment Opreator [432.46 h]; Bobcat [28.86 h]; Roller compactor [28.86 h]; Asphalt Paver [28.86 h]; Rubber Compactor [57.61 h]; MC1/RC2 Sprinkler [28.86 h]; Dump Truck [259.41 h]; Bituminous base course (Grading I - Class A), including Prime coat (MC1) & tack coate (RC2) [1054.68 m3] → Skilled labor [28.86 h]; Unskilled Labor [172.94 h]; Equipment Opreator [432.46 h]; Bobcat [28.86 h]; Roller compactor [28.86 h]; Asphalt Paver [28.86 h]; Rubber Compactor [57.6 h]; MC1/RC2 Sprinkler [28.86 h]; Dump Truck [259.41 h]; Bituminous base course (Grading I - Class A), including Prime coat (MC1) & tack coate (RC2) [1054.68 m3] |
| 509 | **RHD4-02-002-C081-(RD)-Precast Concrete Curb** | 2027-06-26 → 2027-12-02 (+159d) | 2027-07-05 → 2027-12-12 (+160d) |  |  |
| RHD4CZ1C081RD5100 | Supply and installation Precast Concrete Kerb for Roads - (RD-C-8 /1)-Z1-C081-RD | 2027-06-26 → 2027-12-02 (+159d) | 2027-07-05 → 2027-12-12 (+160d) |  |  |
| 512 | **RHD4-02-002-C081-(RD)-Traffic Signage** | 2027-07-31 → 2028-02-20 (+204d) | 2027-08-07 → 2028-03-02 (+208d) |  |  |
| RHD4CZ1C081RD8100 | Installation of Traffic Signage for Road Network - (RD-C-8 /1)-Z1-C081-RD | 2027-07-31 → 2028-02-20 (+204d) | 2027-08-07 → 2028-03-02 (+208d) |  |  |
| 508 | **RHD4-02-002-C081-(RD)-Bituminous concrete wearing course including tack coat (RC2)** | 2027-08-19 → 2028-03-15 (+209d) | 2027-08-21 → 2028-03-16 (+208d) |  |  |
| RHD4CZ1C081RD4100 | Supply, lay and compaction Asphaltic wearing course including tack Coat (RC2)for Road Network - (RD-C-8 /1)-Z1-C081-RD | 2027-08-19 → 2028-03-15 (+209d) | 2027-08-21 → 2028-03-16 (+208d) |  | resources Skilled labor [14.81 h]; Unskilled Labor [89.08 h]; Equipment Opreator [222.71 h]; Bobcat [14.81 h]; Roller compactor [14.81 h]; Asphalt Paver [14.81 h]; Rubber Compactor [29.73 h]; MC1/RC2 Sprinkler [14.81 h]; Dump Truck [133.62 h]; Bituminous concrete wearing course, (Grading I - Class A), including tack coat (RC2) [708.3 m3] → Skilled labor [14.81 h]; Unskilled Labor [89.08 h]; Equipment Opreator [222.71 h]; Bobcat [14.81 h]; Roller compactor [14.81 h]; Asphalt Paver [14.81 h]; Rubber Compactor [29.73 h]; MC1/RC2 Sprinkler [14.81 h]; Dump Truck [133.6 h]; Bituminous concrete wearing course, (Grading I - Class A), including tack coat (RC2) [708.3 m3] |
| 511 | **RHD4-02-002-C081-(RD)-Pavement Marking** | 2027-08-28 → 2028-03-23 (+208d) | 2027-09-07 → 2028-04-03 (+209d) |  |  |
| RHD4CZ1C081RD7100 | Pavement Markings for Road Network - (RD-C-8 /1)-Z1-C081-RD | 2027-08-28 → 2028-03-23 (+208d) | 2027-09-07 → 2028-04-03 (+209d) |  | resources Skilled labor [108.79 h]; Unskilled Labor [217.59 h]; Equipment Opreator [108.79 h]; Road Marking Machine [108.79 h]; Retroreflective Thermoplastic White Traffic Markings [336.59 m2]; Retroreflective Thermoplastic Yellow, Traffic Markings [346.53 m2]; Retroreflective raised pavement markers (cat eyes) [1850 nr]; Ceramic raised pavement markers [4 nr] → Skilled labor [108.8 h]; Unskilled Labor [217.6 h]; Equipment Opreator [108.8 h]; Road Marking Machine [108.8 h]; Retroreflective Thermoplastic White Traffic Markings [336.59 m2]; Retroreflective Thermoplastic Yellow, Traffic Markings [346.53 m2]; Retroreflective raised pavement markers (cat eyes) [1850 nr]; Ceramic raised pavement markers [4 nr] |
| 329 | **RHD4-02-002-Z1-C081-Storm Network - ST** | 2026-08-23 → 2027-01-30 (+160d) | 2026-10-31 → 2027-04-12 (+163d) |  |  |
| 5253 | **RHD4-02-002-C081-(ST)-GRP Pipes - 800 mm diameter** | 2026-08-23 → 2027-01-30 (+160d) | 2026-09-02 → 2027-02-09 (+160d) |  |  |
| RHD4CZ1C081ST1104 | Excavation works for GRP Pipe Line 800 mm - (RD-C-8 /1)-Z1-C081-ST | 2026-08-23 → 2027-01-30 (+160d) | 2026-08-24 → 2027-01-31 (+160d) |  |  |
| RHD4CZ1C081ST1204 | Bedding works for GRP Pipe Line 800 mm - (RD-C-8 /1)-Z1-C081-ST | 2026-08-25 → 2027-02-01 (+160d) | 2026-08-26 → 2027-02-02 (+160d) |  |  |
| RHD4CZ1C081ST1304 | Installing for GRP Pipe Line 800 mm - (RD-C-8 /1)-Z1-C081-ST | 2026-08-27 → 2027-02-03 (+160d) | 2026-08-29 → 2027-02-04 (+159d) |  |  |
| RHD4CZ1C081ST1404 | Primary Test for GRP Pipe Line 800 mm - (RD-C-8 /1)-Z1-C081-ST | 2026-08-30 → 2027-02-06 (+160d) | 2026-08-31 → 2027-02-07 (+160d) |  |  |

| ID | Task | Start | Finish | Duration | Other |
| --- | --- | --- | --- | --- | --- |
| RHD4CZ1C081ST1504 | Backfilling and warning tape works for GRP Pipe Line 800 mm - (RD-C-8 /1)-Z1-C081-ST | 2026-09-01 → 2027-02-08 (+160d) | 2026-09-02 → 2027-02-09 (+160d) |  |  |
| 346 | **RHD4-02-002-C081-(ST)-MH Works - 1200 mm diameter** | 2026-08-25 → 2027-02-01 (+160d) | 2026-09-22 → 2027-03-02 (+161d) |  |  |
| RHD4CZ1C081ST3100 | Excavation and PC Blinding works for MH 1200 mm - (RD-C-8 /1)-Z1-C081-ST | 2026-08-25 → 2027-02-01 (+160d) | 2026-08-30 → 2027-02-06 (+160d) |  |  |
| RHD4CZ1C081ST3200 | Installation of Base for MH 1200 mm - (RD-C-8 /1)-Z1-C081-ST | 2026-08-31 → 2027-02-07 (+160d) | 2026-09-05 → 2027-02-11 (+159d) |  |  |
| RHD4CZ1C081ST3300 | MH Ring and C.Slab works and Backfilling works for MH 1200 mm - (RD-C-8 /1)-Z1-C081-ST | 2026-09-06 → 2027-02-13 (+160d) | 2026-09-10 → 2027-02-17 (+160d) |  |  |
| RHD4CZ1C081ST3400 | Steel Cover for MH 1200 mm - (RD-C-8 /1)-Z1-C081-ST | 2026-09-12 → 2027-02-18 (+159d) | 2026-09-16 → 2027-02-24 (+161d) |  | resources Skilled labor [47.16 h]; Unskilled Labor [94.42 h]; Equipment Opreator [9.47 h]; Boom Truck [9.47 h]; MH (1200mm Diameter) - ST - depth 1.50 - 2.5m [0.65 nr] → Skilled labor [47.16 h]; Unskilled Labor [94.4 h]; Equipment Opreator [9.47 h]; Boom Truck [9.47 h]; MH (1200mm Diameter) - ST - depth 1.50 - 2.5m [0.65 nr] |
| RHD4CZ1C081ST3500 | Finishing, Benching, Testing works for MH 1200 mm - (RD-C-8 /1)-Z1-C081-ST | 2026-09-17 → 2027-02-25 (+161d) | 2026-09-22 → 2027-03-02 (+161d) |  | resources Skilled labor [47.16 h]; Unskilled Labor [94.42 h]; Plumber [47.16 h]; Equipment Opreator [9.47 h]; Water Truck [9.47 h]; MH (1200mm Diameter) - ST - depth 1.50 - 2.5m [1.3 nr] → Skilled labor [47.16 h]; Unskilled Labor [94.4 h]; Plumber [47.16 h]; Equipment Opreator [9.47 h]; Water Truck [9.47 h]; MH (1200mm Diameter) - ST - depth 1.50 - 2.5m [1.3 nr] |
| 347 | **RHD4-02-002-C081-(ST)-MH Works - 1500 mm diameter** | 2026-08-31 → 2027-02-07 (+160d) | 2026-10-31 → 2027-04-12 (+163d) |  |  |
| RHD4CZ1C081ST3101 | Excavation and PC Blinding works for MH 1500 mm - (RD-C-8 /1)-Z1-C081-ST | 2026-08-31 → 2027-02-07 (+160d) | 2026-09-03 → 2027-02-10 (+160d) |  |  |
| RHD4CZ1C081ST3201 | Installation of Base for MH 1500 mm - (RD-C-8 /1)-Z1-C081-ST | 2026-09-06 → 2027-02-13 (+160d) | 2026-09-09 → 2027-02-16 (+160d) |  |  |
| RHD4CZ1C081ST3301 | MH Ring and C.Slab works and Backfilling works for MH 1500 mm - (RD-C-8 /1)-Z1-C081-ST | 2026-09-12 → 2027-02-18 (+159d) | 2026-09-15 → 2027-02-23 (+161d) |  |  |
| RHD4CZ1C081ST3401 | Steel Cover for MH 1500 mm - (RD-C-8 /1)-Z1-C081-ST | 2026-09-17 → 2027-02-25 (+161d) | 2026-09-19 → 2027-02-27 (+161d) |  |  |
| RHD4CZ1C081ST3501 | Finishing, Benching, Testing works for MH 1500 mm - (RD-C-8 /1)-Z1-C081-ST | 2026-10-27 → 2027-04-08 (+163d) | 2026-10-31 → 2027-04-12 (+163d) |  |  |
| 335 | **RHD4-02-002-C081-(ST)-GRP Pipes - 900 mm diameter** | 2026-09-06 → 2027-02-13 (+160d) | 2026-09-16 → 2027-02-24 (+161d) |  |  |
| RHD4CZ1C081ST1105 | Excavation works for GRP Pipe Line 900 mm - (RD-C-8 /1)-Z1-C081-ST | 2026-09-06 → 2027-02-13 (+160d) | 2026-09-07 → 2027-02-14 (+160d) |  |  |
| RHD4CZ1C081ST1205 | Bedding works for GRP Pipe Line 900 mm - (RD-C-8 /1)-Z1-C081-ST | 2026-09-08 → 2027-02-15 (+160d) | 2026-09-09 → 2027-02-16 (+160d) |  |  |
| RHD4CZ1C081ST1305 | Installing for GRP Pipe Line 900 mm - (RD-C-8 /1)-Z1-C081-ST | 2026-09-10 → 2027-02-17 (+160d) | 2026-09-12 → 2027-02-18 (+159d) |  | resources Skilled labor [1.63 h]; Unskilled Labor [17.64 h]; Plumber [8.06 h]; GRP (900mm Diameter) - ST - Depth: 1.51m - 2.5m [24.63 m]; GRP (900mm Diameter) - ST - Depth: 2.51m - 3.5m [49.19 m]; GRP (900mm Diameter) - ST - Depth: 3.51m - 4.5m [11.74 m]; GRP (900mm Diameter) - ST - Depth: more than 4.5m → Skilled labor [1.6 h]; Unskilled Labor [17.64 h]; Plumber [8.06 h]; GRP (900mm Diameter) - ST - Depth: 1.51m - 2.5m [24.63 m]; GRP (900mm Diameter) - ST - Depth: 2.51m - 3.5m [49.19 m]; GRP (900mm Diameter) - ST - Depth: 3.51m - 4.5m [11.74 m]; GRP (900mm Diameter) - ST - Depth: more than 4.5m |
| RHD4CZ1C081ST1405 | Primary Test for GRP Pipe Line 900 mm - (RD-C-8 /1)-Z1-C081-ST | 2026-09-13 → 2027-02-20 (+160d) | 2026-09-14 → 2027-02-21 (+160d) |  | resources Skilled labor [1.63 h]; Unskilled Labor [9.15 h]; Plumber [7.62 h]; Equipment Opreator [9.15 h]; Water Truck [9.15 h]; GRP (900mm Diameter) - ST - Depth: 1.51m - 2.5m [12.31 m]; GRP (900mm Diameter) - ST - Depth: 2.51m - 3.5m [24.6 m]; GRP (900mm Diameter) - ST - Depth: 3.51m - 4.5m [5.87 m]; GRP (900mm Diameter) - ST - Depth: more than 4.5m → Skilled labor [1.6 h]; Unskilled Labor [9.15 h]; Plumber [7.62 h]; Equipment Opreator [9.15 h]; Water Truck [9.15 h]; GRP (900mm Diameter) - ST - Depth: 1.51m - 2.5m [12.31 m]; GRP (900mm Diameter) - ST - Depth: 2.51m - 3.5m [24.6 m]; GRP (900mm Diameter) - ST - Depth: 3.51m - 4.5m [5.87 m]; GRP (900mm Diameter) - ST - Depth: more than 4.5m |
| RHD4CZ1C081ST1505 | Backfilling and warning tape works for GRP Pipe Line 900 mm - (RD-C-8 /1)-Z1-C081-ST | 2026-09-15 → 2027-02-23 (+161d) | 2026-09-16 → 2027-02-24 (+161d) |  |  |
| 333 | **RHD4-02-002-C081-(ST)-GRP Pipes - 700 mm diameter** | 2026-09-08 → 2027-02-15 (+160d) | 2026-09-19 → 2027-02-27 (+161d) |  |  |
| RHD4CZ1C081ST1103 | Excavation works for GRP Pipe Line 700 mm - (RD-C-8 /1)-Z1-C081-ST | 2026-09-08 → 2027-02-15 (+160d) | 2026-09-09 → 2027-02-16 (+160d) |  | resources Skilled labor [3.38 h]; Unskilled Labor [3.38 h]; Equipment Opreator [4.03 h]; Excavator-Poclain [3.38 h]; Dump Truck [0.65 h]; GRP (700mm Diameter) - ST - Depth: 1.51m - 2.5m [9.22 m] → Skilled labor [3.38 h]; Unskilled Labor [3.38 h]; Equipment Opreator [4 h]; Excavator-Poclain [3.38 h]; Dump Truck [0.65 h]; GRP (700mm Diameter) - ST - Depth: 1.51m - 2.5m [9.22 m] |
| RHD4CZ1C081ST1203 | Bedding works for GRP Pipe Line 700 mm - (RD-C-8 /1)-Z1-C081-ST | 2026-09-10 → 2027-02-17 (+160d) | 2026-09-12 → 2027-02-18 (+159d) |  |  |
| RHD4CZ1C081ST1303 | Installing for GRP Pipe Line 700 mm - (RD-C-8 /1)-Z1-C081-ST | 2026-09-13 → 2027-02-20 (+160d) | 2026-09-14 → 2027-02-21 (+160d) |  | resources Unskilled Labor [3.38 h]; Plumber [1.63 h]; GRP (700mm Diameter) - ST - Depth: 1.51m - 2.5m [24.58 m] → Unskilled Labor [3.38 h]; Plumber [1.6 h]; GRP (700mm Diameter) - ST - Depth: 1.51m - 2.5m [24.58 m] |
| RHD4CZ1C081ST1403 | Primary Test for GRP Pipe Line 700 mm - (RD-C-8 /1)-Z1-C081-ST | 2026-09-15 → 2027-02-23 (+161d) | 2026-09-16 → 2027-02-24 (+161d) |  | resources Unskilled Labor [1.63 h]; Plumber [1.63 h]; Equipment Opreator [1.63 h]; Water Truck [1.63 h]; GRP (700mm Diameter) - ST - Depth: 1.51m - 2.5m [12.29 m] → Unskilled Labor [1.6 h]; Plumber [1.6 h]; Equipment Opreator [1.6 h]; Water Truck [1.6 h]; GRP (700mm Diameter) - ST - Depth: 1.51m - 2.5m [12.29 m] |
| RHD4CZ1C081ST1503 | Backfilling and warning tape works for GRP Pipe Line 700 mm - (RD-C-8 /1)-Z1-C081-ST | 2026-09-17 → 2027-02-25 (+161d) | 2026-09-19 → 2027-02-27 (+161d) |  |  |
| 332 | **RHD4-02-002-C081-(ST)-GRP Pipes - 600 mm diameter** | 2026-09-10 → 2027-02-17 (+160d) | 2026-09-21 → 2027-03-01 (+161d) |  |  |
| RHD4CZ1C081ST1102 | Excavation works for GRP Pipe Line 600 mm - (RD-C-8 /1)-Z1-C081-ST | 2026-09-10 → 2027-02-17 (+160d) | 2026-09-12 → 2027-02-18 (+159d) |  |  |
| RHD4CZ1C081ST1202 | Bedding works for GRP Pipe Line 600 mm - (RD-C-8 /1)-Z1-C081-ST | 2026-09-13 → 2027-02-20 (+160d) | 2026-09-14 → 2027-02-21 (+160d) |  |  |
| RHD4CZ1C081ST1302 | Installing for GRP Pipe Line 600 mm - (RD-C-8 /1)-Z1-C081-ST | 2026-09-15 → 2027-02-23 (+161d) | 2026-09-16 → 2027-02-24 (+161d) |  |  |
| RHD4CZ1C081ST1402 | Primary Test for GRP Pipe Line 600 mm - (RD-C-8 /1)-Z1-C081-ST | 2026-09-17 → 2027-02-25 (+161d) | 2026-09-19 → 2027-02-27 (+161d) |  |  |
| RHD4CZ1C081ST1502 | Backfilling and warning tape works for GRP Pipe Line 600 mm - (RD-C-8 /1)-Z1-C081-ST | 2026-09-20 → 2027-02-28 (+161d) | 2026-09-21 → 2027-03-01 (+161d) |  |  |
| 331 | **RHD4-02-002-C081-(ST)-GRP Pipes - 500 mm diameter** | 2026-09-13 → 2027-02-20 (+160d) | 2026-09-24 → 2027-03-03 (+160d) |  |  |
| RHD4CZ1C081ST1101 | Excavation works for GRP Pipe Line 500 mm - (RD-C-8 /1)-Z1-C081-ST | 2026-09-13 → 2027-02-20 (+160d) | 2026-09-14 → 2027-02-21 (+160d) |  | resources Skilled labor [3.38 h]; Unskilled Labor [3.38 h]; Equipment Opreator [4.03 h]; Excavator-Poclain [3.38 h]; Dump Truck [0.65 h]; GRP (500mm Diameter) - ST - Depth less than 1.5 m [6.24 m]; GRP (500mm Diameter) - ST - Depth: 1.51m - 2.5m → Skilled labor [3.38 h]; Unskilled Labor [3.38 h]; Equipment Opreator [4 h]; Excavator-Poclain [3.38 h]; Dump Truck [0.65 h]; GRP (500mm Diameter) - ST - Depth less than 1.5 m [6.24 m]; GRP (500mm Diameter) - ST - Depth: 1.51m - 2.5m |
| RHD4CZ1C081ST1201 | Bedding works for GRP Pipe Line 500 mm - (RD-C-8 /1)-Z1-C081-ST | 2026-09-15 → 2027-02-23 (+161d) | 2026-09-16 → 2027-02-24 (+161d) |  |  |
| RHD4CZ1C081ST1301 | Installing for GRP Pipe Line 500 mm - (RD-C-8 /1)-Z1-C081-ST | 2026-09-17 → 2027-02-25 (+161d) | 2026-09-19 → 2027-02-27 (+161d) |  |  |
| RHD4CZ1C081ST1401 | Primary Test for GRP Pipe Line 500 mm - (RD-C-8 /1)-Z1-C081-ST | 2026-09-20 → 2027-02-28 (+161d) | 2026-09-21 → 2027-03-01 (+161d) |  |  |
| RHD4CZ1C081ST1501 | Backfilling and warning tape works for GRP Pipe Line 500 mm - (RD-C-8 /1)-Z1-C081-ST | 2026-09-22 → 2027-03-02 (+161d) | 2026-09-24 → 2027-03-03 (+160d) |  |  |
| 330 | **RHD4-02-002-C081-(ST)-GRP Pipes - 400 mm diameter** | 2026-09-13 → 2027-02-20 (+160d) | 2026-10-06 → 2027-03-18 (+163d) |  |  |
| RHD4CZ1C081ST1100 | Excavation works for GRP Pipe Line 400 mm - (RD-C-8 /1)-Z1-C081-ST | 2026-09-13 → 2027-02-20 (+160d) | 2026-09-16 → 2027-02-24 (+161d) |  | resources Skilled labor [35.94 h]; Unskilled Labor [35.94 h]; Equipment Opreator [43.13 h]; Excavator-Poclain [35.94 h]; Dump Truck [7.19 h]; GRP (400mm Diameter) - ST - Depth less than 1.5 m [59.83 m]; GRP (400mm Diameter) - ST - Depth: 1.51m - 2.5 m [16.19 m] → Skilled labor [35.94 h]; Unskilled Labor [35.94 h]; Equipment Opreator [43.13 h]; Excavator-Poclain [35.94 h]; Dump Truck [7.2 h]; GRP (400mm Diameter) - ST - Depth less than 1.5 m [59.83 m]; GRP (400mm Diameter) - ST - Depth: 1.51m - 2.5 m [16.19 m] |
| RHD4CZ1C081ST1200 | Bedding works for GRP Pipe Line 400 mm - (RD-C-8 /1)-Z1-C081-ST | 2026-09-17 → 2027-02-25 (+161d) | 2026-09-21 → 2027-03-01 (+161d) |  |  |
| RHD4CZ1C081ST1300 | Installing for GRP Pipe Line 400 mm - (RD-C-8 /1)-Z1-C081-ST | 2026-09-22 → 2027-03-02 (+161d) | 2026-09-27 → 2027-03-06 (+160d) |  |  |
| RHD4CZ1C081ST1400 | Primary Test for GRP Pipe Line 400 mm - (RD-C-8 /1)-Z1-C081-ST | 2026-09-28 → 2027-03-07 (+160d) | 2026-10-01 → 2027-03-14 (+164d) |  |  |
| RHD4CZ1C081ST1500 | Backfilling and warning tape works for GRP Pipe Line 400 mm - (RD-C-8 /1)-Z1-C081-ST | 2026-10-03 → 2027-03-15 (+163d) | 2026-10-06 → 2027-03-18 (+163d) |  |  |
| 344 | **RHD4-02-002-C081-(ST)-UPVC Pipes - 300 mm diameter** | 2026-10-07 → 2027-03-20 (+164d) | 2026-10-26 → 2027-04-07 (+163d) |  |  |
| RHD4CZ1C081ST2100 | Excavation works for UPVC Pipe Line 300 mm - (RD-C-8 /1)-Z1-C081-ST | 2026-10-07 → 2027-03-20 (+164d) | 2026-10-11 → 2027-03-23 (+163d) |  | resources Skilled labor [35.18 h]; Unskilled Labor [35.18 h]; Equipment Opreator [42.25 h]; Excavator-Poclain [35.18 h]; Dump Truck [7.08 h]; UPVC (300mm Diameter) - ST - Depth less than 1.5 [77.35 m]; UPVC (300mm Diameter) - ST - Depth: 1.51m - 2.5m → Skilled labor [35.2 h]; Unskilled Labor [35.2 h]; Equipment Opreator [42.25 h]; Excavator-Poclain [35.2 h]; Dump Truck [7.08 h]; UPVC (300mm Diameter) - ST - Depth less than 1.5 [77.35 m]; UPVC (300mm Diameter) - ST - Depth: 1.51m - 2.5m |
| RHD4CZ1C081ST2200 | Bedding works for UPVC Pipe Line 300 mm - (RD-C-8 /1)-Z1-C081-ST | 2026-10-12 → 2027-03-24 (+163d) | 2026-10-14 → 2027-03-27 (+164d) |  |  |
| RHD4CZ1C081ST2300 | Installing for UPVC Pipe Line 300 mm - (RD-C-8 /1)-Z1-C081-ST | 2026-10-15 → 2027-03-28 (+164d) | 2026-10-19 → 2027-03-31 (+163d) |  | resources Unskilled Labor [70.46 h]; Plumber [35.18 h]; UPVC (300mm Diameter) - ST - Depth less than 1.5 [348.09 m]; UPVC (300mm Diameter) - ST - Depth: 1.51m - 2.5m → Unskilled Labor [70.46 h]; Plumber [35.2 h]; UPVC (300mm Diameter) - ST - Depth less than 1.5 [348.09 m]; UPVC (300mm Diameter) - ST - Depth: 1.51m - 2.5m |
| RHD4CZ1C081ST2400 | Primary Test for UPVC Pipe Line 300 mm - (RD-C-8 /1)-Z1-C081-ST | 2026-10-20 → 2027-04-01 (+163d) | 2026-10-21 → 2027-04-03 (+164d) |  |  |
| RHD4CZ1C081ST2500 | Backfilling and warning tape works for UPVC Pipe Line 300 mm - (RD-C-8 /1)-Z1-C081-ST | 2026-10-22 → 2027-04-04 (+164d) | 2026-10-26 → 2027-04-07 (+163d) |  |  |
| 352 | **RHD4-02-002-C081-(ST)-Concrete Encasement** | 2026-10-18 → 2027-03-30 (+163d) | 2026-10-19 → 2027-03-31 (+163d) |  |  |
| RHD4CZ1C081ST6100 | Pipe Encasement for Storm Pipelines - (RD-C-8 /1)-Z1-C081-ST | 2026-10-18 → 2027-03-30 (+163d) | 2026-10-19 → 2027-03-31 (+163d) |  | resources Skilled labor [7.73 h]; Unskilled Labor [7.73 h]; Equipment Opreator [8.49 h]; Concrete Mixer Truck [0.76 h]; Dump Truck [7.73 h]; Pipe Encasement - ST [141.85 m3] → Skilled labor [7.73 h]; Unskilled Labor [7.73 h]; Equipment Opreator [8.49 h]; Concrete Mixer Truck [0.8 h]; Dump Truck [7.73 h]; Pipe Encasement - ST [141.85 m3] |
| 353 | **RHD4-02-002-Z1-C081-Catch Basin - ST** | 2026-09-03 → 2027-02-10 (+160d) | 2026-09-16 → 2027-03-17 (+182d) |  |  |
| 354 | **RHD4-02-002-C081-(ST)-Single Catch Basin Works** | 2026-09-03 → 2027-02-10 (+160d) | 2026-09-14 → 2027-03-15 (+182d) |  |  |
| RHD4CZ1C081ST7100 | Excavation works for Single Catch Basin - (RD-C-8 /1)-Z1-C081-ST | 2026-09-03 → 2027-02-10 (+160d) | 2026-09-05 → 2027-02-14 (+162d) | 2d → 4d | resources Skilled labor [39.21 h]; Unskilled Labor [78.41 h]; Equipment Opreator [58.81 h]; Excavator-Poclain [39.21 h]; Dump Truck [19.6 h]; Single Catch basin - ST [9 nr] → Skilled labor [39.2 h]; Unskilled Labor [78.4 h]; Equipment Opreator [58.81 h]; Excavator-Poclain [39.2 h]; Dump Truck [19.6 h]; Single Catch basin - ST [9 nr] |
| RHD4CZ1C081ST7200 | PC Blinding, Installation and Pipe connection for Single Catch Basin - (RD-C-8 /1)-Z1-C081-ST | 2026-09-06 → 2027-02-15 (+162d) | 2026-09-07 → 2027-02-18 (+164d) | 2d → 4d | resources Skilled labor [39.21 h]; Unskilled Labor [78.41 h]; Plumber [19.6 h]; Equipment Opreator [7.84 h]; Boom Truck [7.84 h]; Single Catch basin - ST [7.2 nr] → Skilled labor [39.2 h]; Unskilled Labor [78.4 h]; Plumber [19.6 h]; Equipment Opreator [7.84 h]; Boom Truck [7.84 h]; Single Catch basin - ST [7.2 nr] |
| RHD4CZ1C081ST7300 | Rings & C.Slab & Final Backfill for Single Catch Basin - (RD-C-8 /1)-Z1-C081-ST | 2026-09-08 → 2027-02-20 (+165d) | 2026-09-09 → 2027-02-25 (+169d) | 2d → 5d |  |
| RHD4CZ1C081ST7400 | Steel Cover for Single Catch Basin - (RD-C-8 /1)-Z1-C081-ST | 2026-09-10 → 2027-02-27 (+170d) | 2026-09-12 → 2027-03-02 (+171d) | 2d → 4d | resources Skilled labor [39.21 h]; Unskilled Labor [39.21 h]; Equipment Opreator [7.84 h]; Boom Truck [7.84 h]; Single Catch basin - ST [1.8 nr] → Skilled labor [39.2 h]; Unskilled Labor [39.2 h]; Equipment Opreator [7.84 h]; Boom Truck [7.84 h]; Single Catch basin - ST [1.8 nr] |
| RHD4CZ1C081ST7500 | Finishing and Insulation works for Single Catch Basin - (RD-C-8 /1)-Z1-C081-ST | 2026-09-13 → 2027-03-03 (+171d) | 2026-09-14 → 2027-03-15 (+182d) | 2d → 8d | resources Skilled labor [78.41 h]; Unskilled Labor [156.82 h]; Equipment Opreator [15.68 h]; Boom Truck [15.68 h]; Single Catch basin - ST [5.4 nr] → Skilled labor [78.4 h]; Unskilled Labor [156.8 h]; Equipment Opreator [15.68 h]; Boom Truck [15.68 h]; Single Catch basin - ST [5.4 nr] |
| 355 | **RHD4-02-002-C081-(ST)-Double Catch Basin Works** | 2026-09-03 → 2027-02-10 (+160d) | 2026-09-16 → 2027-03-17 (+182d) |  |  |
| RHD4CZ1C081ST8100 | Excavation works for Double Catch Basin - (RD-C-8 /1)-Z1-C081-ST | 2026-09-03 → 2027-02-10 (+160d) | 2026-09-05 → 2027-02-11 (+159d) |  |  |
| RHD4CZ1C081ST8200 | PC Blinding, Installation and Pipe connection for Double Catch Basin - (RD-C-8 /1)-Z1-C081-ST | 2026-09-08 → 2027-02-20 (+165d) | 2026-09-09 → 2027-02-21 (+165d) |  |  |
| RHD4CZ1C081ST8300 | Rings & C.Slab & Final Backfillfor Double Catch Basin - (RD-C-8 /1)-Z1-C081-ST | 2026-09-10 → 2027-02-27 (+170d) | 2026-09-12 → 2027-02-28 (+169d) |  |  |
| RHD4CZ1C081ST8400 | Steel Cover for Double Catch Basin - (RD-C-8 /1)-Z1-C081-ST | 2026-09-13 → 2027-03-03 (+171d) | 2026-09-14 → 2027-03-04 (+171d) |  |  |
| RHD4CZ1C081ST8500 | Finishing and Insulation works for Double Catch Basin - (RD-C-8 /1)-Z1-C081-ST | 2026-09-15 → 2027-03-16 (+182d) | 2026-09-16 → 2027-03-17 (+182d) |  |  |
| 378 | **RHD4-02-002-Z1-C081-Sewage Network - SW** | 2026-10-20 → 2027-04-01 (+163d) | 2026-11-17 → 2027-04-29 (+163d) |  |  |
| 388 | **RHD4-02-002-C081-(SW)-MH Works - 1200 mm diameter** | 2026-10-20 → 2027-04-01 (+163d) | 2026-11-12 → 2027-04-25 (+164d) |  |  |
| RHD4CZ1C081SW3100 | Excavation and PC Blinding works for MH 1200 mm - (RD-C-8 /1)-Z1-C081-SW | 2026-10-20 → 2027-04-01 (+163d) | 2026-10-24 → 2027-04-05 (+163d) |  |  |
| RHD4CZ1C081SW3200 | Installation of Base for MH 1200 mm - (RD-C-8 /1)-Z1-C081-SW | 2026-10-25 → 2027-04-06 (+163d) | 2026-10-29 → 2027-04-11 (+164d) |  |  |
| RHD4CZ1C081SW3300 | MH Ring and C.Slab works and Backfilling works for MH 1200 mm - (RD-C-8 /1)-Z1-C081-SW | 2026-10-31 → 2027-04-12 (+163d) | 2026-11-04 → 2027-04-17 (+164d) |  |  |
| RHD4CZ1C081SW3400 | Steel Cover for MH 1200 mm - (RD-C-8 /1)-Z1-C081-SW | 2026-11-05 → 2027-04-18 (+164d) | 2026-11-07 → 2027-04-19 (+163d) |  |  |

| ID | Task | Start | Finish | Duration | Other |
| --- | --- | --- | --- | --- | --- |
| RHD4CZ1C081SW3500 | Finishing, Benching, Testing works for MH 1200 mm - (RD-C-8 /1)-Z1-C081-SW | 2026-11-08 → 2027-04-20 (+163d) | 2026-11-12 → 2027-04-25 (+164d) |  |  |
| 384 | **RHD4-02-002-C081-(SW)-UPVC Pipes - 200 mm diameter** | 2026-10-25 → 2027-04-06 (+163d) | 2026-11-17 → 2027-04-29 (+163d) |  |  |
| RHD4CZ1C081SW2100 | Excavation works for UPVC Pipe Line 200 mm - (RD-C-8 /1)-Z1-C081-SW | 2026-10-25 → 2027-04-06 (+163d) | 2026-10-28 → 2027-04-10 (+164d) |  | resources Skilled labor [36.05 h]; Unskilled Labor [36.05 h]; Equipment Opreator [43.34 h]; Excavator-Poclain [36.05 h]; Dump Truck [7.19 h]; UPVC (200mm Diameter) - SW - Depth: less than 1.5m; UPVC (200mm Diameter) - SW - Depth: 1.51m - 2.5m [14.41 m]; UPVC (200mm Diameter) - SW - Depth: 2.51m - 3.5m [14.25 m]; UPVC (200mm Diameter) - SW - Depth: 3.51m - 4.5m [14.55 m]; UPVC (200mm Diameter) - SW - Depth: 4.51m - 5.5m [24.18 m] → Skilled labor [36.05 h]; Unskilled Labor [36.05 h]; Equipment Opreator [43.34 h]; Excavator-Poclain [36.05 h]; Dump Truck [7.2 h]; UPVC (200mm Diameter) - SW - Depth: less than 1.5m; UPVC (200mm Diameter) - SW - Depth: 1.51m - 2.5m [14.41 m]; UPVC (200mm Diameter) - SW - Depth: 2.51m - 3.5m [14.25 m]; UPVC (200mm Diameter) - SW - Depth: 3.51m - 4.5m [14.55 m]; UPVC (200mm Diameter) - SW - Depth: 4.51m - 5.5m [24.18 m] |
| RHD4CZ1C081SW2200 | Bedding works for UPVC Pipe Line 200 mm - (RD-C-8 /1)-Z1-C081-SW | 2026-10-29 → 2027-04-11 (+164d) | 2026-11-02 → 2027-04-14 (+163d) |  |  |
| RHD4CZ1C081SW2300 | Installing for UPVC Pipe Line 200 mm - (RD-C-8 /1)-Z1-C081-SW | 2026-11-05 → 2027-04-18 (+164d) | 2026-11-09 → 2027-04-21 (+163d) |  |  |
| RHD4CZ1C081SW2400 | Primary Test for UPVC Pipe Line 200 mm - (RD-C-8 /1)-Z1-C081-SW | 2026-11-10 → 2027-04-22 (+163d) | 2026-11-12 → 2027-04-25 (+164d) |  |  |
| RHD4CZ1C081SW2500 | Backfilling and warning tape works for UPVC Pipe Line 200 mm - (RD-C-8 /1)-Z1-C081-SW | 2026-11-14 → 2027-04-26 (+163d) | 2026-11-17 → 2027-04-29 (+163d) |  |  |
| 415 | **RHD4-02-002-Z1-C081-Potable Network - PT** | 2026-11-18 → 2027-05-01 (+164d) | 2027-02-23 → 2027-09-19 (+208d) |  |  |
| 418 | **RHD4-02-002-C081-(PT)-HDPE Pipes - 200 mm diameter** | 2026-11-18 → 2027-05-01 (+164d) | 2026-12-22 → 2027-06-08 (+168d) |  |  |
| RHD4CZ1C081PT1102 | Excavation works for HDPE Pipline 200 mm - (RD-C-8 /1)-Z1-C081-PT | 2026-11-18 → 2027-05-01 (+164d) | 2026-11-24 → 2027-05-06 (+163d) |  |  |
| RHD4CZ1C081PT1202 | Bedding works for HDPE Pipline 200 mm - (RD-C-8 /1)-Z1-C081-PT | 2026-11-25 → 2027-05-08 (+164d) | 2026-11-30 → 2027-05-12 (+163d) |  |  |
| RHD4CZ1C081PT1302 | Installing for HDPE Pipline 200 mm - (RD-C-8 /1)-Z1-C081-PT | 2026-12-01 → 2027-05-13 (+163d) | 2026-12-10 → 2027-05-27 (+168d) |  |  |
| RHD4CZ1C081PT1402 | Primary Test for HDPE Pipline 200 mm - (RD-C-8 /1)-Z1-C081-PT | 2026-12-12 → 2027-05-29 (+168d) | 2026-12-14 → 2027-05-31 (+168d) |  |  |
| RHD4CZ1C081PT1502 | Backfilling and warning tape works for HDPE Pipline 200 mm - (RD-C-8 /1)-Z1-C081-PT | 2026-12-15 → 2027-06-01 (+168d) | 2026-12-22 → 2027-06-08 (+168d) |  |  |
| 6848 | **RHD4-02-002-C081-(PT)-HDPE Pipes - 110 mm diameter** | 2026-12-23 → 2027-06-09 (+168d) | 2027-01-07 → 2027-06-24 (+168d) |  |  |
| RHD4CZ1C081PT1100 | Excavation works for HDPE Pipline 110 mm - (RD-C-8 /1)-Z1-C081-PT | 2026-12-23 → 2027-06-09 (+168d) | 2026-12-26 → 2027-06-12 (+168d) |  |  |
| RHD4CZ1C081PT1200 | Bedding works for HDPE Pipline 110 mm - (RD-C-8 /1)-Z1-C081-PT | 2026-12-27 → 2027-06-13 (+168d) | 2026-12-28 → 2027-06-14 (+168d) |  |  |
| RHD4CZ1C081PT1300 | Installing for HDPE Pipline 110 mm - (RD-C-8 /1)-Z1-C081-PT | 2026-12-29 → 2027-06-15 (+168d) | 2027-01-02 → 2027-06-19 (+168d) |  |  |
| RHD4CZ1C081PT1400 | Primary Test for HDPE Pipline 110 mm - (RD-C-8 /1)-Z1-C081-PT | 2027-01-03 → 2027-06-20 (+168d) | 2027-01-04 → 2027-06-21 (+168d) |  |  |
| RHD4CZ1C081PT1500 | Backfilling and warning tape works for HDPE Pipline 110 mm - (RD-C-8 /1)-Z1-C081-PT | 2027-01-05 → 2027-06-22 (+168d) | 2027-01-07 → 2027-06-24 (+168d) |  |  |
| 421 | **RHD4-02-002-C081-(PT)-Gate Valves (Direct Buried)** | 2027-01-09 → 2027-06-26 (+168d) | 2027-01-12 → 2027-06-29 (+168d) |  |  |
| RHD4CZ1C081PT3100 | Installation for Direct Buried Gate Valves - (RD-C-8 /1)-Z1-C081-PT | 2027-01-09 → 2027-06-26 (+168d) | 2027-01-10 → 2027-06-27 (+168d) |  |  |
| RHD4CZ1C081PT3200 | Stem and Service box for Direct Buried Gate Valves - (RD-C-8 /1)-Z1-C081-PT | 2027-01-11 → 2027-06-28 (+168d) | 2027-01-12 → 2027-06-29 (+168d) |  |  |
| 426 | **RHD4-02-002-C081-(PT)-Air Valve Chambers** | 2026-12-27 → 2027-06-13 (+168d) | 2027-01-04 → 2027-06-21 (+168d) |  |  |
| RHD4CZ1C081PT2102 | Excavation and Bedding for Air Valve Chambers for Potable Water Network - (RD-C-8 /1)-Z1-C081-PT | 2026-12-27 → 2027-06-13 (+168d) | 2026-12-28 → 2027-06-14 (+168d) |  |  |
| RHD4CZ1C081PT2202 | PC works for Air Valve Chambers for Potable Water Network - (RD-C-8 /1)-Z1-C081-PT | 2026-12-29 → 2027-06-15 (+168d) | 2026-12-30 → 2027-06-16 (+168d) |  |  |
| RHD4CZ1C081PT2302 | Installation for Air Valve Chambers for Potable Water Network - (RD-C-8 /1)-Z1-C081-PT | 2026-12-31 → 2027-06-17 (+168d) | 2027-01-02 → 2027-06-19 (+168d) |  |  |
| RHD4CZ1C081PT2402 | Backfilling works for Air Valve Chambers for Potable Water Network - (RD-C-8 /1)-Z1-C081-PT | 2027-01-03 → 2027-06-20 (+168d) | 2027-01-04 → 2027-06-21 (+168d) |  |  |
| 427 | **RHD4-02-002-C081-(PT)-Air Valves** | 2026-12-31 → 2027-06-17 (+168d) | 2027-01-06 → 2027-06-23 (+168d) |  |  |
| RHD4CZ1C081PT3103 | Installation for Air Valves for Potable Water Network - (RD-C-8 /1)-Z1-C081-PT | 2026-12-31 → 2027-06-17 (+168d) | 2027-01-02 → 2027-06-19 (+168d) |  |  |
| RHD4CZ1C081PT3203 | Stem and Service box for Air Valves for Potable Water Network - (RD-C-8 /1)-Z1-C081-PT | 2027-01-05 → 2027-06-22 (+168d) | 2027-01-06 → 2027-06-23 (+168d) |  |  |
| 428 | **RHD4-02-002-C081-(PT)-Fire Hydrant** | 2027-01-07 → 2027-06-24 (+168d) | 2027-02-23 → 2027-09-19 (+208d) |  |  |
| RHD4CZ1C081PT4100 | Excavation and Bedding and Pipe Installation for Fire Hydrant - (RD-C-8 /1)-Z1-C081-PT | 2027-01-07 → 2027-06-24 (+168d) | 2027-01-11 → 2027-06-28 (+168d) |  |  |
| RHD4CZ1C081PT4200 | Valve Installation for Fire Hydrant - (RD-C-8 /1)-Z1-C081-PT | 2027-02-07 → 2027-09-07 (+212d) | 2027-02-09 → 2027-09-09 (+212d) |  |  |
| RHD4CZ1C081PT4300 | Stem for Fire Hydrant - (RD-C-8 /1)-Z1-C081-PT | 2027-02-10 → 2027-09-11 (+213d) | 2027-02-13 → 2027-09-13 (+212d) |  |  |
| RHD4CZ1C081PT4400 | Fire Installation for Fire Hydrant - (RD-C-8 /1)-Z1-C081-PT | 2027-02-14 → 2027-09-14 (+212d) | 2027-02-16 → 2027-09-16 (+212d) |  |  |
| RHD4CZ1C081PT4500 | Protection Barriers for Fire Hydrant - (RD-C-8 /1)-Z1-C081-PT | 2027-02-17 → 2027-09-18 (+213d) | 2027-02-23 → 2027-09-19 (+208d) | 5d → 2d |  |
| 430 | **RHD4-02-002-Z1-C081-Irrigation Network - IRR** | 2026-11-25 → 2027-05-08 (+164d) | 2026-12-20 → 2027-06-06 (+168d) |  |  |
| 6863 | **RHD4-02-002-C081-(IRR)-HDPE Pipes - 160 mm diameter** | 2026-11-25 → 2027-05-08 (+164d) | 2026-12-06 → 2027-05-23 (+168d) |  |  |
| RHD4CZ1C081IRR1100 | Excavation works for HDPE Pipline 160 mm - (RD-C-8 /1)-Z1-C081-IRR | 2026-11-25 → 2027-05-08 (+164d) | 2026-11-26 → 2027-05-09 (+164d) |  |  |
| RHD4CZ1C081IRR1200 | Bedding works for HDPE Pipline 160 mm - (RD-C-8 /1)-Z1-C081-IRR | 2026-11-28 → 2027-05-10 (+163d) | 2026-11-29 → 2027-05-11 (+163d) |  |  |
| RHD4CZ1C081IRR1300 | Installing for HDPE Pipline 160 mm - (RD-C-8 /1)-Z1-C081-IRR | 2026-11-30 → 2027-05-12 (+163d) | 2026-12-01 → 2027-05-13 (+163d) |  | resources Unskilled Labor [4.03 h]; Plumber [2.07 h]; Equipment Opreator [2.07 h]; Boom Truck [2.07 h]; HDPE (160mm Diameter) - TSE - Depth: less than 1.5m [12.6 m] → Unskilled Labor [4 h]; Plumber [2.07 h]; Equipment Opreator [2.07 h]; Boom Truck [2.07 h]; HDPE (160mm Diameter) - TSE - Depth: less than 1.5m [12.6 m] |
| RHD4CZ1C081IRR1400 | Primary Test for HDPE Pipline 160 mm - (RD-C-8 /1)-Z1-C081-IRR | 2026-12-02 → 2027-05-19 (+168d) | 2026-12-03 → 2027-05-20 (+168d) |  |  |
| RHD4CZ1C081IRR1500 | Backfilling and warning tape works for HDPE Pipline 160 mm - (RD-C-8 /1)-Z1-C081-IRR | 2026-12-05 → 2027-05-22 (+168d) | 2026-12-06 → 2027-05-23 (+168d) |  |  |
| 6876 | **RHD4-02-002-C081-(IRR)-Air Valve Chamber** | 2026-12-07 → 2027-05-24 (+168d) | 2026-12-15 → 2027-06-01 (+168d) |  |  |
| RHD4CZ1C081IRR2102 | Excavation and Bedding for Valve Chamber for Irrigation Network - (RD-C-8 /1)-Z1-C081-IRR | 2026-12-07 → 2027-05-24 (+168d) | 2026-12-08 → 2027-05-25 (+168d) |  |  |
| RHD4CZ1C081IRR2202 | PC works for Valve Chamber for Irrigation Network - (RD-C-8 /1)-Z1-C081-IRR | 2026-12-09 → 2027-05-26 (+168d) | 2026-12-10 → 2027-05-27 (+168d) |  |  |
| RHD4CZ1C081IRR2302 | Installation for Valve Chamber for Irrigation Network - (RD-C-8 /1)-Z1-C081-IRR | 2026-12-12 → 2027-05-29 (+168d) | 2026-12-13 → 2027-05-30 (+168d) |  |  |
| RHD4CZ1C081IRR2402 | Backfilling works for Valve Chamber for Irrigation Network - (RD-C-8 /1)-Z1-C081-IRR | 2026-12-14 → 2027-05-31 (+168d) | 2026-12-15 → 2027-06-01 (+168d) |  |  |
| 6877 | **RHD4-02-002-C081-(IRR)-Air Valves** | 2026-12-16 → 2027-06-02 (+168d) | 2026-12-20 → 2027-06-06 (+168d) |  |  |
| RHD4CZ1C081IRR3103 | Installation for Air Valves for Irrigation Network - (RD-C-8 /1)-Z1-C081-IRR | 2026-12-16 → 2027-06-02 (+168d) | 2026-12-17 → 2027-06-03 (+168d) |  |  |
| RHD4CZ1C081IRR3203 | Stem and Service box for Air Valves for Irrigation Network - (RD-C-8 /1)-Z1-C081-IRR | 2026-12-19 → 2027-06-05 (+168d) | 2026-12-20 → 2027-06-06 (+168d) |  |  |
| 435 | **RHD4-02-002-C081-(IRR)-HDPE Pipes - 315 mm diameter** | 2026-11-25 → 2027-05-08 (+164d) | 2026-12-17 → 2027-06-03 (+168d) |  |  |
| RHD4CZ1C081IRR1104 | Excavation works for HDPE Pipline 315 mm - (RD-C-8 /1)-Z1-C081-IRR | 2026-11-25 → 2027-05-08 (+164d) | 2026-11-30 → 2027-05-12 (+163d) |  |  |
| RHD4CZ1C081IRR1204 | Bedding works for HDPE Pipline 315 mm - (RD-C-8 /1)-Z1-C081-IRR | 2026-12-01 → 2027-05-13 (+163d) | 2026-12-05 → 2027-05-22 (+168d) |  | resources Skilled labor [40.84 h]; Unskilled Labor [81.57 h]; Equipment Opreator [81.57 h]; Excavator-Poclain [40.84 h]; Dump Truck [40.84 h]; HDPE (315mm Diameter) - TSE - Depth: less than 1.5m [37.47 m] → Skilled labor [40.8 h]; Unskilled Labor [81.6 h]; Equipment Opreator [81.6 h]; Excavator-Poclain [40.8 h]; Dump Truck [40.8 h]; HDPE (315mm Diameter) - TSE - Depth: less than 1.5m [37.47 m] |
| RHD4CZ1C081IRR1304 | Installing for HDPE Pipline 315 mm - (RD-C-8 /1)-Z1-C081-IRR | 2026-12-06 → 2027-05-23 (+168d) | 2026-12-10 → 2027-05-27 (+168d) |  | resources Unskilled Labor [108.79 h]; Plumber [54.45 h]; Equipment Opreator [54.45 h]; Boom Truck [54.45 h]; HDPE (315mm Diameter) - TSE - Depth: less than 1.5m [337.21 m] → Unskilled Labor [108.8 h]; Plumber [54.45 h]; Equipment Opreator [54.45 h]; Boom Truck [54.45 h]; HDPE (315mm Diameter) - TSE - Depth: less than 1.5m [337.21 m] |
| RHD4CZ1C081IRR1404 | Primary Test for HDPE Pipline 315 mm - (RD-C-8 /1)-Z1-C081-IRR | 2026-12-12 → 2027-05-29 (+168d) | 2026-12-13 → 2027-05-30 (+168d) |  |  |
| RHD4CZ1C081IRR1504 | Backfilling and warning tape works for HDPE Pipline 315 mm - (RD-C-8 /1)-Z1-C081-IRR | 2026-12-14 → 2027-05-31 (+168d) | 2026-12-17 → 2027-06-03 (+168d) |  | resources Skilled labor [40.84 h]; Unskilled Labor [81.57 h]; Equipment Opreator [81.57 h]; Excavator-Poclain [40.84 h]; Dump Truck [40.84 h]; HDPE (315mm Diameter) - TSE - Depth: less than 1.5m [149.87 m] → Skilled labor [40.8 h]; Unskilled Labor [81.6 h]; Equipment Opreator [81.6 h]; Excavator-Poclain [40.8 h]; Dump Truck [40.8 h]; HDPE (315mm Diameter) - TSE - Depth: less than 1.5m [149.87 m] |
| 439 | **RHD4-02-002-C081-(IRR)-Gate Valves (Direct Buried)** | 2026-12-12 → 2027-05-29 (+168d) | 2026-12-15 → 2027-06-01 (+168d) |  |  |
| RHD4CZ1C081IRR3100 | Installation for Direct Buried Gate Valves - (RD-C-8 /1)-Z1-C081-IRR | 2026-12-12 → 2027-05-29 (+168d) | 2026-12-13 → 2027-05-30 (+168d) |  |  |
| RHD4CZ1C081IRR3200 | Stem and Service box for Direct Buried Gate Valves - (RD-C-8 /1)-Z1-C081-IRR | 2026-12-14 → 2027-05-31 (+168d) | 2026-12-15 → 2027-06-01 (+168d) |  |  |
| 464 | **RHD4-02-002-Z1-C081-Medium Voltage Network - MV** | 2027-01-07 → 2027-06-24 (+168d) | 2027-02-09 → 2027-07-27 (+168d) |  |  |
| 465 | **RHD4-02-002-C081-(MV)-Medium Voltage cable trench** | 2027-01-07 → 2027-06-24 (+168d) | 2027-02-01 → 2027-07-19 (+168d) |  |  |
| RHD4CZ1C081MV1100 | Excavation for Medium Voltage Trench - (RD-C-8 /1)-Z1-C081-MV | 2027-01-07 → 2027-06-24 (+168d) | 2027-01-13 → 2027-06-30 (+168d) |  | resources Skilled labor [56.74 h]; Unskilled Labor [113.59 h]; Equipment Opreator [170.33 h]; Excavator-Poclain [56.74 h]; Dump Truck [113.59 h]; Excavation for Trench size 60cm wide and 80cm deep ( for 2 cables) [365.04 m3] → Skilled labor [56.74 h]; Unskilled Labor [113.6 h]; Equipment Opreator [170.33 h]; Excavator-Poclain [56.74 h]; Dump Truck [113.6 h]; Excavation for Trench size 60cm wide and 80cm deep ( for 2 cables) [365.04 m3] |
| RHD4CZ1C081MV1200 | Trench Backfilling for Medium Voltage Network - (RD-C-8 /1)-Z1-C081-MV | 2027-01-26 → 2027-07-13 (+168d) | 2027-02-01 → 2027-07-19 (+168d) |  | resources Skilled labor [56.74 h]; Unskilled Labor [56.74 h]; Equipment Opreator [113.59 h]; Dump Truck [113.59 h]; Excavation for Trench size 60cm wide and 80cm deep ( for 2 cables) [156.44 m3] → Skilled labor [56.74 h]; Unskilled Labor [56.74 h]; Equipment Opreator [113.6 h]; Dump Truck [113.6 h]; Excavation for Trench size 60cm wide and 80cm deep ( for 2 cables) [156.44 m3] |
| 467 | **RHD4-02-002-C081-(MV)-Medium Voltage cables 3Cx 500 mm²** | 2027-01-14 → 2027-07-01 (+168d) | 2027-02-07 → 2027-07-25 (+168d) |  |  |
| RHD4CZ1C081MV3100 | Installation of Medium Voltage Cables 3Cx 500 mm² - (RD-C-8 /1)-Z1-C081-MV | 2027-01-14 → 2027-07-01 (+168d) | 2027-01-23 → 2027-07-10 (+168d) |  |  |
| RHD4CZ1C081MV3200 | Joints Installation of Medium Voltage Cables 3Cx 500 mm² - (RD-C-8 /1)-Z1-C081-MV | 2027-01-24 → 2027-07-11 (+168d) | 2027-01-25 → 2027-07-12 (+168d) |  |  |
| RHD4CZ1C081MV3300 | Testing of Medium Voltage Cables 3Cx 500 mm² - (RD-C-8 /1)-Z1-C081-MV | 2027-02-02 → 2027-07-20 (+168d) | 2027-02-04 → 2027-07-22 (+168d) |  |  |
| RHD4CZ1C081MV3400 | Termination of Medium Voltage Cables 3Cx 500 mm² - (RD-C-8 /1)-Z1-C081-MV | 2027-02-06 → 2027-07-24 (+168d) | 2027-02-07 → 2027-07-25 (+168d) |  |  |

| ID | Task | Start | Finish | Duration | Other |
| --- | --- | --- | --- | --- | --- |
| 468 | **RHD4-02-002-C081-(MV)-Medium Voltage cables 3Cx 50 mm²** | 2027-02-08 → 2027-07-26 (+168d) | 2027-02-09 → 2027-07-27 (+168d) |  |  |
| RHD4CZ1C081MV3401 | Termination of Medium Voltage Cables 3Cx 50 mm² - (RD-C-8 /1)-Z1-C081-MV | 2027-02-08 → 2027-07-26 (+168d) | 2027-02-09 → 2027-07-27 (+168d) |  |  |
| 5388 | **RHD4-02-002-C081-(MV)-Normally open Point (Outdoor Type)** | 2027-02-02 → 2027-07-20 (+168d) | 2027-02-06 → 2027-07-24 (+168d) |  |  |
| RHD4CZ1C081MV4100 | Installation for Normally open Point - (RD-C-8 /1)-Z1-C081-MV | 2027-02-02 → 2027-07-20 (+168d) | 2027-02-03 → 2027-07-21 (+168d) |  |  |
| RHD4CZ1C081MV4200 | Termination for Normally open Point - (RD-C-8 /1)-Z1-C081-MV | 2027-02-04 → 2027-07-22 (+168d) | 2027-02-06 → 2027-07-24 (+168d) |  |  |
| 471 | **RHD4-02-002-Z1-C081-Low Voltage Network - LV** | 2026-12-19 → 2027-06-05 (+168d) | 2027-01-21 → 2027-07-08 (+168d) |  |  |
| 472 | **RHD4-02-002-C081-(LV)-Low Voltage duct banks** | 2026-12-19 → 2027-06-05 (+168d) | 2026-12-31 → 2027-06-17 (+168d) |  |  |
| RHD4CZ1C081LV2100 | Excavation of Duct Banks for Low Voltage Network - (RD-C-8 /1)-Z1-C081-LV | 2026-12-19 → 2027-06-05 (+168d) | 2026-12-21 → 2027-06-07 (+168d) |  |  |
| RHD4CZ1C081LV2200 | Installation of Duct Banks for Low Voltage Network - (RD-C-8 /1)-Z1-C081-LV | 2026-12-22 → 2027-06-08 (+168d) | 2026-12-26 → 2027-06-12 (+168d) |  |  |
| RHD4CZ1C081LV2300 | Pouring of Duct Banks for Low Voltage Network - (RD-C-8 /1)-Z1-C081-LV | 2026-12-27 → 2027-06-13 (+168d) | 2026-12-29 → 2027-06-15 (+168d) |  | resources Skilled labor [28.21 h]; Unskilled Labor [28.21 h]; Equipment Opreator [11.22 h]; Concrete Mixer Truck [5.66 h]; Concrete Pump [5.66 h]; Duct bank for LV cables UPVC (2xø110mm) [25.23 m] → Skilled labor [28.21 h]; Unskilled Labor [28.21 h]; Equipment Opreator [11.2 h]; Concrete Mixer Truck [5.66 h]; Concrete Pump [5.66 h]; Duct bank for LV cables UPVC (2xø110mm) [25.23 m] |
| RHD4CZ1C081LV2400 | Backfilling of Duct Banks for Low Voltage Network - (RD-C-8 /1)-Z1-C081-LV | 2026-12-30 → 2027-06-16 (+168d) | 2026-12-31 → 2027-06-17 (+168d) |  |  |
| 473 | **RHD4-02-002-C081-(LV)-Low Voltage Drawpit** | 2026-12-30 → 2027-06-16 (+168d) | 2027-01-03 → 2027-06-20 (+168d) |  |  |
| RHD4CZ1C081LV5100 | Excavation of Drawpit size 900x900x1000mm for Low Voltage Network - (RD-C-8 /1)-Z1-C081-LV | 2026-12-30 → 2027-06-16 (+168d) | 2026-12-31 → 2027-06-17 (+168d) |  | resources Skilled labor [1.85 h]; Unskilled Labor [1.85 h]; Equipment Opreator [1.42 h]; Excavator-Poclain [0.76 h]; Dump Truck [0.76 h]; Drawpit with medium duty steel cover, size900x900x1000mm, [0.3 Unit] → Skilled labor [1.85 h]; Unskilled Labor [1.85 h]; Equipment Opreator [1.42 h]; Excavator-Poclain [0.8 h]; Dump Truck [0.8 h]; Drawpit with medium duty steel cover, size900x900x1000mm, [0.3 Unit] |
| RHD4CZ1C081LV5200 | Installation of Drawpit size 900x900x1000mm for Low Voltage Network - (RD-C-8 /1)-Z1-C081-LV | 2027-01-02 → 2027-06-19 (+168d) | 2027-01-03 → 2027-06-20 (+168d) |  | resources Skilled labor [1.85 h]; Unskilled Labor [1.85 h]; Equipment Opreator [0.76 h]; Boom Truck [0.76 h]; Drawpit with medium duty steel cover, size900x900x1000mm, [1.7 Unit] → Skilled labor [1.85 h]; Unskilled Labor [1.85 h]; Equipment Opreator [0.8 h]; Boom Truck [0.8 h]; Drawpit with medium duty steel cover, size900x900x1000mm, [1.7 Unit] |
| 474 | **RHD4-02-002-C081-(LV)-Low Voltage cables** | 2027-01-04 → 2027-06-21 (+168d) | 2027-01-21 → 2027-07-08 (+168d) |  |  |
| RHD4CZ1C081LV3100 | Excavation for Low Voltage Cables for Low Voltage Network - (RD-C-8 /1)-Z1-C081-LV | 2027-01-04 → 2027-06-21 (+168d) | 2027-01-09 → 2027-06-26 (+168d) |  |  |
| RHD4CZ1C081LV3200 | Cable Laying of Low Voltage Cables for Low Voltage Network - (RD-C-8 /1)-Z1-C081-LV | 2027-01-10 → 2027-06-27 (+168d) | 2027-01-13 → 2027-06-30 (+168d) |  | resources Skilled labor [37.24 h]; Unskilled Labor [148.76 h]; Electrician [74.38 h]; Equipment Opreator [111.63 h]; Boom Truck [37.24 h]; Cable Laying Machine [74.38 h]; Cable, Copper 4x50mm2/ CU/XLPE/PVC +1x25mm2 CU/PVC [147.22 m]; Cable, Copper 3x10mm2/ CU/XLPE/SWA/PVC [467.66 m] → Skilled labor [37.24 h]; Unskilled Labor [148.8 h]; Electrician [74.4 h]; Equipment Opreator [111.63 h]; Boom Truck [37.24 h]; Cable Laying Machine [74.4 h]; Cable, Copper 4x50mm2/ CU/XLPE/PVC +1x25mm2 CU/PVC [147.22 m]; Cable, Copper 3x10mm2/ CU/XLPE/SWA/PVC [467.66 m] |
| RHD4CZ1C081LV3300 | Warning tape and Backfill for Low Voltage Cables for Low Voltage Network - (RD-C-8 /1)-Z1-C081-LV | 2027-01-14 → 2027-07-01 (+168d) | 2027-01-18 → 2027-07-05 (+168d) |  | resources Skilled labor [37.24 h]; Unskilled Labor [148.76 h]; Electrician [74.38 h]; Equipment Opreator [37.24 h]; Boom Truck [37.24 h]; Cable, Copper 4x50mm2/ CU/XLPE/PVC +1x25mm2 CU/PVC [36.81 m]; Cable, Copper 3x10mm2/ CU/XLPE/SWA/PVC [116.91 m] → Skilled labor [37.24 h]; Unskilled Labor [148.8 h]; Electrician [74.4 h]; Equipment Opreator [37.24 h]; Boom Truck [37.24 h]; Cable, Copper 4x50mm2/ CU/XLPE/PVC +1x25mm2 CU/PVC [36.81 m]; Cable, Copper 3x10mm2/ CU/XLPE/SWA/PVC [116.91 m] |
| RHD4CZ1C081LV3400 | Testing of Low Voltage Cables for Low Voltage Network - (RD-C-8 /1)-Z1-C081-LV | 2027-01-19 → 2027-07-06 (+168d) | 2027-01-21 → 2027-07-08 (+168d) |  |  |
| 477 | **RHD4-02-002-Z1-C081-Street Lighting Network - SL** | 2027-01-04 → 2027-06-21 (+168d) | 2027-03-25 → 2027-09-05 (+164d) |  |  |
| 478 | **RHD4-02-002-C081-(SL)-Street Lighting duct banks** | 2027-01-04 → 2027-06-21 (+168d) | 2027-01-23 → 2027-07-10 (+168d) |  |  |
| RHD4CZ1C081SL2100 | Excavation of Duct Banks for Street Lighting Network - (RD-C-8 /1)-Z1-C081-SL | 2027-01-04 → 2027-06-21 (+168d) | 2027-01-07 → 2027-06-24 (+168d) |  |  |
| RHD4CZ1C081SL2200 | Installation of Duct Banks for Street Lighting Network - (RD-C-8 /1)-Z1-C081-SL | 2027-01-09 → 2027-06-26 (+168d) | 2027-01-14 → 2027-07-01 (+168d) |  |  |
| RHD4CZ1C081SL2300 | Pouring of Duct Banks for Street Lighting Network - (RD-C-8 /1)-Z1-C081-SL | 2027-01-16 → 2027-07-03 (+168d) | 2027-01-19 → 2027-07-06 (+168d) |  |  |
| RHD4CZ1C081SL2400 | Backfilling of Duct Banks for Street Lighting Network - (RD-C-8 /1)-Z1-C081-SL | 2027-01-20 → 2027-07-07 (+168d) | 2027-01-23 → 2027-07-10 (+168d) |  |  |
| 479 | **RHD4-02-002-C081-(SL)-Street Lighting Drawpit** | 2027-01-28 → 2027-07-15 (+168d) | 2027-02-01 → 2027-07-19 (+168d) |  |  |
| RHD4CZ1C081SL5100 | Excavation of Drawpit size 600x600x900mm for Street Lighting Network - (RD-C-8 /1)-Z1-C081-SL | 2027-01-28 → 2027-07-15 (+168d) | 2027-01-30 → 2027-07-17 (+168d) |  |  |
| RHD4CZ1C081SL5200 | Installation of Drawpit size 600x600x900mm for Street Lighting Network - (RD-C-8 /1)-Z1-C081-SL | 2027-01-31 → 2027-07-18 (+168d) | 2027-02-01 → 2027-07-19 (+168d) |  |  |
| 480 | **RHD4-02-002-C081-(SL)-Street Lighting cables** | 2027-02-07 → 2027-07-25 (+168d) | 2027-03-13 → 2027-08-23 (+163d) |  |  |
| RHD4CZ1C081SL3100 | Excavation for Street Lighting Cables for Street Lighting Network - (RD-C-8 /1)-Z1-C081-SL | 2027-02-07 → 2027-07-25 (+168d) | 2027-02-15 → 2027-08-02 (+168d) |  |  |
| RHD4CZ1C081SL3200 | Cable Laying of Street Lighting Cables for Street Lighting Network - (RD-C-8 /1)-Z1-C081-SL | 2027-02-16 → 2027-08-03 (+168d) | 2027-02-24 → 2027-08-10 (+167d) |  |  |
| RHD4CZ1C081SL3300 | Warning tape and Backfill for Street Lighting Cables for Street Lighting Network - (RD-C-8 /1)-Z1-C081-SL | 2027-02-25 → 2027-08-11 (+167d) | 2027-03-04 → 2027-08-18 (+167d) |  |  |
| RHD4CZ1C081SL3400 | Testing of Street Lighting Cables for Street Lighting Network - (RD-C-8 /1)-Z1-C081-SL | 2027-03-06 → 2027-08-19 (+166d) | 2027-03-13 → 2027-08-23 (+163d) |  |  |
| 481 | **RHD4-02-002-C081-(SL)-Street Lighting Poles** | 2027-01-24 → 2027-07-11 (+168d) | 2027-03-25 → 2027-09-05 (+164d) |  |  |
| RHD4CZ1C081SL1100 | Excavation for RC Base for Lighting Poles for Street Lighting Network - (RD-C-8 /1)-Z1-C081-SL | 2027-01-24 → 2027-07-11 (+168d) | 2027-01-27 → 2027-07-14 (+168d) |  |  |
| RHD4CZ1C081SL1200 | Installation for RC Base for Lighting Poles for Street Lighting Network - (RD-C-8 /1)-Z1-C081-SL | 2027-01-28 → 2027-07-15 (+168d) | 2027-02-01 → 2027-07-19 (+168d) |  |  |
| RHD4CZ1C081SL1300 | Backfill for RC Base for Lighting Poles for Street Lighting Network - (RD-C-8 /1)-Z1-C081-SL | 2027-02-02 → 2027-07-20 (+168d) | 2027-02-06 → 2027-07-24 (+168d) |  |  |
| RHD4CZ1C081SL1400 | Installation for Lighting Poles for Street Lighting Network - (RD-C-8 /1)-Z1-C081-SL | 2027-03-14 → 2027-08-24 (+163d) | 2027-03-18 → 2027-08-29 (+164d) |  |  |
| RHD4CZ1C081SL1500 | Luminaire Installation for Lighting Poles for Street Lighting Network - (RD-C-8 /1)-Z1-C081-SL | 2027-03-20 → 2027-08-30 (+163d) | 2027-03-25 → 2027-09-05 (+164d) |  | resources Unskilled Labor [127.74 h]; Electrician [63.93 h]; Equipment Opreator [24.94 h]; Boom Truck [25.59 h]; Street Lighting( LED) Luminaire of Output ?18553 lumen [84 Unit]; Street Lighting( LED) Luminaire of Output ?10898 lumen [4 Unit] → Unskilled Labor [127.74 h]; Electrician [63.93 h]; Equipment Opreator [24.94 h]; Boom Truck [25.6 h]; Street Lighting( LED) Luminaire of Output ?18553 lumen [84 Unit]; Street Lighting( LED) Luminaire of Output ?10898 lumen [4 Unit] |
| 482 | **RHD4-02-002-C081-(SL)-Street Lighting Feeder Pillars** | 2027-03-06 → 2027-08-19 (+166d) | 2027-03-21 → 2027-08-31 (+163d) |  |  |
| RHD4CZ1C081SL4100 | Leveling for Distribution Pillars for Street Lighting Network - (RD-C-8 /1)-Z1-C081-SL | 2027-03-06 → 2027-08-19 (+166d) | 2027-03-07 → 2027-08-21 (+167d) |  |  |
| RHD4CZ1C081SL4200 | Lean Concrete for Distribution Pillars for Street Lighting Network - (RD-C-8 /1)-Z1-C081-SL | 2027-03-08 → 2027-08-22 (+167d) | 2027-03-13 → 2027-08-23 (+163d) |  |  |
| RHD4CZ1C081SL4300 | Installation of Distribution Pillars for Street Lighting Network - (RD-C-8 /1)-Z1-C081-SL | 2027-03-20 → 2027-08-30 (+163d) | 2027-03-21 → 2027-08-31 (+163d) |  |  |
| 483 | **RHD4-02-002-C081-(SL)-Street Lighting Earthing System** | 2027-03-22 → 2027-09-01 (+163d) | 2027-03-23 → 2027-09-02 (+163d) |  |  |
| RHD4CZ1C081SL6100 | Installation of Earthing for Lighting Poles and Fedder Pillers for Street Lighting Network - (RD-C-8 /1)-Z1-C081-SL | 2027-03-22 → 2027-09-01 (+163d) | 2027-03-23 → 2027-09-02 (+163d) |  |  |
| 489 | **RHD4-02-002-Z1-C081-Telecommunications Network - TC** | 2026-09-03 → 2027-02-10 (+160d) | 2027-05-02 → 2027-10-13 (+164d) |  |  |
| 490 | **RHD4-02-002-C081-(TC)-Telecommunications Ducts** | 2027-03-24 → 2027-09-04 (+164d) | 2027-05-02 → 2027-10-13 (+164d) |  |  |
| RHD4CZ1C081TC2100 | Excavation of HDPE Ducts for Telecom Network - (RD-C-8 /1)-Z1-C081-TC | 2027-03-24 → 2027-09-04 (+164d) | 2027-04-04 → 2027-09-14 (+163d) |  | resources Skilled labor [99.97 h]; Unskilled Labor [99.97 h]; Equipment Opreator [199.95 h]; Excavator-Poclain [99.97 h]; Dump Truck [99.97 h]; (6*50mm) HDPE ducts -TC [213.2 m]; (6*50mm+2*32mm) HDPE ducts -TC [31 m]; (6*50mm+4*32mm) HDPE ducts -TC [19.2 m]; (2*32mm) HDPE ducts -TC [12.02 m] → Skilled labor [100 h]; Unskilled Labor [100 h]; Equipment Opreator [199.95 h]; Excavator-Poclain [100 h]; Dump Truck [100 h]; (6*50mm) HDPE ducts -TC [213.2 m]; (6*50mm+2*32mm) HDPE ducts -TC [31 m]; (6*50mm+4*32mm) HDPE ducts -TC [19.2 m]; (2*32mm) HDPE ducts -TC [12.02 m] |
| RHD4CZ1C081TC2200 | Installation of HDPE Ducts for Telecom Network - (RD-C-8 /1)-Z1-C081-TC | 2027-04-05 → 2027-09-15 (+163d) | 2027-04-20 → 2027-10-02 (+165d) |  |  |
| RHD4CZ1C081TC2400 | Backfilling of HDPE Ducts for Telecom Network - (RD-C-8 /1)-Z1-C081-TC | 2027-04-21 → 2027-10-03 (+165d) | 2027-05-02 → 2027-10-13 (+164d) |  | resources Skilled labor [99.97 h]; Unskilled Labor [99.97 h]; Equipment Opreator [39.97 h]; Excavator-Poclain [39.97 h]; (6*50mm) HDPE ducts -TC [159.9 m]; (6*50mm+2*32mm) HDPE ducts -TC [23.25 m]; (6*50mm+4*32mm) HDPE ducts -TC [14.4 m]; (2*32mm) HDPE ducts -TC [9.02 m] → Skilled labor [100 h]; Unskilled Labor [100 h]; Equipment Opreator [40 h]; Excavator-Poclain [40 h]; (6*50mm) HDPE ducts -TC [159.9 m]; (6*50mm+2*32mm) HDPE ducts -TC [23.25 m]; (6*50mm+4*32mm) HDPE ducts -TC [14.4 m]; (2*32mm) HDPE ducts -TC [9.02 m] |
| 491 | **RHD4-02-002-C081-(TC)-Telecommunications Manholes** | 2027-04-05 → 2027-09-15 (+163d) | 2027-04-13 → 2027-09-25 (+165d) |  |  |
| RHD4CZ1C081TC5100 | Excavation for Manholes for Telecom Network - (RD-C-8 /1)-Z1-C081-TC | 2027-04-05 → 2027-09-15 (+163d) | 2027-04-08 → 2027-09-19 (+164d) |  | resources Skilled labor [13.61 h]; Unskilled Labor [13.61 h]; Equipment Opreator [10.89 h]; Excavator-Poclain [5.45 h]; Dump Truck [5.45 h]; Manhole Type 1 - TC [0.9 nr]; Manhole Type 2 - TC [0.3 nr] → Skilled labor [13.6 h]; Unskilled Labor [13.6 h]; Equipment Opreator [10.89 h]; Excavator-Poclain [5.45 h]; Dump Truck [5.45 h]; Manhole Type 1 - TC [0.9 nr]; Manhole Type 2 - TC [0.3 nr] |
| RHD4CZ1C081TC5200 | Installation of Manholes for Telecom Network - (RD-C-8 /1)-Z1-C081-TC | 2027-04-10 → 2027-09-20 (+163d) | 2027-04-13 → 2027-09-25 (+165d) |  | resources Skilled labor [13.61 h]; Unskilled Labor [13.61 h]; Equipment Opreator [5.45 h]; Boom Truck [5.45 h]; Manhole Type 1 - TC [5.1 nr]; Manhole Type 2 - TC [1.7 nr] → Skilled labor [13.6 h]; Unskilled Labor [13.6 h]; Equipment Opreator [5.45 h]; Boom Truck [5.45 h]; Manhole Type 1 - TC [5.1 nr]; Manhole Type 2 - TC [1.7 nr] |
| 5411 | **RHD4-02-002-C081-(TC)-Telecomminications Road Crossings** | 2026-09-03 → 2027-02-10 (+160d) | 2026-09-12 → 2027-02-18 (+159d) |  |  |
| RHD4CZ1C081TC3100 | Excavation for Road Crossings for Telecom Network - (RD-C-8 /1)-Z1-C081-TC | 2026-09-03 → 2027-02-10 (+160d) | 2026-09-05 → 2027-02-11 (+159d) |  | resources Skilled labor [9.37 h]; Unskilled Labor [9.37 h]; Equipment Opreator [18.73 h]; Excavator-Poclain [9.37 h]; Dump Truck [9.37 h]; Road crossing ducts, (6*50mm) HDPE -TC [1.7 m] → Skilled labor [9.36 h]; Unskilled Labor [9.36 h]; Equipment Opreator [18.72 h]; Excavator-Poclain [9.36 h]; Dump Truck [9.36 h]; Road crossing ducts, (6*50mm) HDPE -TC [1.7 m] |
| RHD4CZ1C081TC3200 | Installation of Road Crossings for Telecom Network - (RD-C-8 /1)-Z1-C081-TC | 2026-09-06 → 2027-02-13 (+160d) | 2026-09-07 → 2027-02-15 (+161d) | 2d → 2.01d | resources Carpenter [1.2 h]; Skilled labor [12.52 h]; Unskilled Labor [12.52 h]; Steel Fixer [1.2 h]; Road crossing ducts, (6*50mm) HDPE -TC [1.7 m] → Carpenter [1.2 h]; Skilled labor [12.56 h]; Unskilled Labor [12.56 h]; Steel Fixer [1.2 h]; Road crossing ducts, (6*50mm) HDPE -TC [1.7 m] |
| RHD4CZ1C081TC3300 | Pouring of Road Crossings for Telecom Network - (RD-C-8 /1)-Z1-C081-TC | 2026-09-08 → 2027-02-15 (+160d) | 2026-09-09 → 2027-02-17 (+161d) | 2d → 2.01d | resources Skilled labor [12.52 h]; Unskilled Labor [12.52 h]; Equipment Opreator [5.01 h]; Concrete Mixer Truck [2.5 h]; Concrete Pump [2.5 h]; Road crossing ducts, (6*50mm) HDPE -TC [11.05 m] → Skilled labor [12.56 h]; Unskilled Labor [12.56 h]; Equipment Opreator [5.04 h]; Concrete Mixer Truck [2.48 h]; Concrete Pump [2.48 h]; Road crossing ducts, (6*50mm) HDPE -TC [11.05 m] |
| RHD4CZ1C081TC3400 | Backfilling of Road Crossings for Telecom Network - (RD-C-8 /1)-Z1-C081-TC | 2026-09-10 → 2027-02-17 (+160d) | 2026-09-12 → 2027-02-18 (+159d) |  | resources Skilled labor [9.37 h]; Unskilled Labor [9.37 h]; Equipment Opreator [3.7 h]; Excavator-Poclain [3.7 h]; Road crossing ducts, (6*50mm) HDPE -TC [2.55 m] → Skilled labor [9.36 h]; Unskilled Labor [9.36 h]; Equipment Opreator [3.68 h]; Excavator-Poclain [3.68 h]; Road crossing ducts, (6*50mm) HDPE -TC [2.55 m] |
| 493 | **RHD4-02-002-Z1-C081-Information and Communication Technologies - ICT** | 2027-03-06 → 2027-08-19 (+166d) | 2027-04-19 → 2027-10-06 (+170d) |  |  |
| 494 | **RHD4-02-002-C081-(ICT)-Information and Communication Technologies Ducts** | 2027-03-06 → 2027-08-19 (+166d) | 2027-04-19 → 2027-10-06 (+170d) |  |  |
| RHD4CZ1C081ICT2100 | Excavation of HDPE Ducts for ICT Network - (RD-C-8 /1)-Z1-C081-ICT | 2027-03-06 → 2027-08-19 (+166d) | 2027-03-20 → 2027-08-30 (+163d) |  |  |
| RHD4CZ1C081ICT2200 | Installation of HDPE Ducts for ICT Network - (RD-C-8 /1)-Z1-C081-ICT | 2027-03-21 → 2027-08-31 (+163d) | 2027-04-06 → 2027-09-16 (+163d) |  |  |
| RHD4CZ1C081ICT2400 | Backfilling of HDPE Ducts for ICT Network - (RD-C-8 /1)-Z1-C081-ICT | 2027-04-14 → 2027-09-26 (+165d) | 2027-04-19 → 2027-10-06 (+170d) | 5d → 10d |  |
| 495 | **RHD4-02-002-C081-(ICT)-Information and Communication Technologies Manholes** | 2027-04-05 → 2027-09-15 (+163d) | 2027-04-13 → 2027-09-25 (+165d) |  |  |
| RHD4CZ1C081ICT5100 | Excavation for Manholes for ICT Network - (RD-C-8 /1)-Z1-C081-ICT | 2027-04-05 → 2027-09-15 (+163d) | 2027-04-08 → 2027-09-19 (+164d) |  | resources Skilled labor [13.61 h]; Unskilled Labor [13.61 h]; Equipment Opreator [10.89 h]; Excavator-Poclain [5.45 h]; Dump Truck [5.45 h]; Manhole Type 1 - ICT [0.9 nr]; Manhole Type 2 - ICT [0.3 nr] → Skilled labor [13.6 h]; Unskilled Labor [13.6 h]; Equipment Opreator [10.89 h]; Excavator-Poclain [5.45 h]; Dump Truck [5.45 h]; Manhole Type 1 - ICT [0.9 nr]; Manhole Type 2 - ICT [0.3 nr] |
| RHD4CZ1C081ICT5200 | Installation of Manholes for ICT Network - (RD-C-8 /1)-Z1-C081-ICT | 2027-04-10 → 2027-09-20 (+163d) | 2027-04-13 → 2027-09-25 (+165d) |  | resources Skilled labor [13.61 h]; Unskilled Labor [13.61 h]; Equipment Opreator [5.45 h]; Boom Truck [5.45 h]; Manhole Type 1 - ICT [5.1 nr]; Manhole Type 2 - ICT [1.7 nr] → Skilled labor [13.6 h]; Unskilled Labor [13.6 h]; Equipment Opreator [5.45 h]; Boom Truck [5.45 h]; Manhole Type 1 - ICT [5.1 nr]; Manhole Type 2 - ICT [1.7 nr] |
| 497 | **RHD4-02-002-Z1-C081-Security Network - CCTV** | 2027-05-03 → 2027-10-14 (+164d) | 2027-06-21 → 2027-11-28 (+160d) |  |  |
| 498 | **RHD4-02-002-C081-(CCTV)-Civil Works** | 2027-05-03 → 2027-10-14 (+164d) | 2027-05-13 → 2027-10-25 (+165d) |  |  |
| RHD4CZ1C081CCTV2100 | Civil Works for Security Network - (RD-C-8 /1)-Z1-C081-CCTV | 2027-05-03 → 2027-10-14 (+164d) | 2027-05-13 → 2027-10-25 (+165d) |  |  |
| 499 | **RHD4-02-002-C081-(CCTV)-CCTV Poles** | 2027-05-19 → 2027-10-26 (+160d) | 2027-05-30 → 2027-11-06 (+160d) |  |  |

| ID | Task | Start | Finish | Duration | Complete | Other |
| --- | --- | --- | --- | --- | --- | --- |
| RHD4CZ1C081CCTV1100 | Excavation for RC Base for CCTV Poles for Security Network - (RD-C-8 /1)-Z1-C081-CCTV | 2027-05-19 → 2027-10-26 (+160d) | 2027-05-20 → 2027-10-27 (+160d) |  |  |  |
| RHD4CZ1C081CCTV1200 | Installation for RC Base for CCTV Poles for Security Network - (RD-C-8 /1)-Z1-C081-CCTV | 2027-05-22 → 2027-10-28 (+159d) | 2027-05-23 → 2027-10-30 (+160d) |  |  |  |
| RHD4CZ1C081CCTV1300 | Backfill for RC Base for CCTV Poles for Security Network - (RD-C-8 /1)-Z1-C081-CCTV | 2027-05-24 → 2027-10-31 (+160d) | 2027-05-25 → 2027-11-01 (+160d) |  |  |  |
| RHD4CZ1C081CCTV1400 | Installation for CCTV Poles for Security Network - (RD-C-8 /1)-Z1-C081-CCTV | 2027-05-26 → 2027-11-02 (+160d) | 2027-05-27 → 2027-11-03 (+160d) |  |  |  |
| RHD4CZ1C081CCTV1500 | Protection post Installation for CCTV Poles for Security Network - (RD-C-8 /1)-Z1-C081-CCTV | 2027-05-29 → 2027-11-04 (+159d) | 2027-05-30 → 2027-11-06 (+160d) |  |  |  |
| 501 | **RHD4-02-002-C081-(CCTV)-Power and Infrastructure** | 2027-05-29 → 2027-11-04 (+159d) | 2027-06-01 → 2027-11-08 (+160d) |  |  |  |
| RHD4CZ1C081CCTV4100 | Installation of Power outlet, UPS and midspan for PTZ Camerafor Cameras for Security Network - (RD-C-8 /1)-Z1-C081-CCTV | 2027-05-29 → 2027-11-04 (+159d) | 2027-05-30 → 2027-11-06 (+160d) |  |  |  |
| RHD4CZ1C081CCTV4200 | Short Range Wireless PoP wireless Bridgefor CCTV Poles for Security Network - (RD-C-8 /1)-Z1-C081-CCTV | 2027-05-31 → 2027-11-07 (+160d) | 2027-06-01 → 2027-11-08 (+160d) |  |  |  |
| 500 | **RHD4-02-002-C081-(CCTV)-Camera** | 2027-06-02 → 2027-11-09 (+160d) | 2027-06-03 → 2027-11-10 (+160d) |  |  |  |
| RHD4CZ1C081CCTV3100 | Installation for Cameras for Security Network - (RD-C-8 /1)-Z1-C081-CCTV | 2027-06-02 → 2027-11-09 (+160d) | 2027-06-03 → 2027-11-10 (+160d) |  |  |  |
| 503 | **RHD4-02-002-C081-(CCTV)-CCTV Panels and Components** | 2027-06-05 → 2027-11-11 (+159d) | 2027-06-21 → 2027-11-28 (+160d) |  |  |  |
| RHD4CZ1C081CCTV6100 | Installation for CCTV Panels for Security Network - (RD-C-8 /1)-Z1-C081-CCTV | 2027-06-05 → 2027-11-11 (+159d) | 2027-06-21 → 2027-11-28 (+160d) |  |  |  |
| 1460 | **RHD4-02-002-Z3** | 2026-08-23 → 2026-08-04 (-19d) | 2028-02-20 → 2028-11-04 (+258d) |  |  |  |
| 1650 | **RHD4-02-002-Z3-C011** | 2026-09-03 → 2026-08-23 (-11d) | 2028-01-15 → 2028-09-28 (+257d) |  |  |  |
| 1829 | **RHD4-02-002-Z3-C011-Road Works - RD** | 2026-09-03 → 2026-08-25 (-9d) | 2028-01-15 → 2028-09-28 (+257d) |  |  |  |
| 1830 | **RHD4-02-002-C011-(RD)-Subgrade** | 2026-09-03 → 2026-08-25 (-9d) | 2026-09-12 → 2027-01-20 (+130d) |  |  |  |
| RHD4CZ3C011RD1100 | Supply, lay and compaction subgrade compacted thickness 300 mm for Roads - (RD-C-1 /1)-Z3-C011-RD | 2026-09-03 → 2026-08-25 A (-9d) | 2026-09-12 → 2027-01-20 (+130d) |  | 0% → 33% | resources Skilled labor [152.9 h]; Unskilled Labor [305.91 h]; Electrician [152.9 h]; Equipment Opreator [1044.6 h]; Water Truck [50.42 h]; Roller compactor [76.45 h]; Grader [152.9 h]; Dump Truck [764.72 h]; Subgrade [19126.4 m3] → Skilled labor [152.9 h]; Unskilled Labor [305.91 h]; Electrician [152.9 h]; Equipment Opreator [1044.6 h]; Water Truck [50.4 h]; Roller compactor [76.45 h]; Grader [152.9 h]; Dump Truck [764.72 h]; Subgrade [19126.4 m3] |
| 1831 | **RHD4-02-002-C011-(RD)-Aggregate Base Course** | 2026-09-13 → 2026-09-01 (-12d) | 2026-09-26 → 2027-01-24 (+120d) |  |  |  |
| RHD4CZ3C011RD2100 | Supply, lay and compaction Aggregate base course compacted thickness 300 mmfor Roads - (RD-C-1 /1)-Z3-C011-RD | 2026-09-13 → 2026-09-01 A (-12d) | 2026-09-26 → 2027-01-24 (+120d) |  | 0% → 75% | resources Skilled labor [73.62 h]; Unskilled Labor [147.24 h]; Equipment Opreator [932.32 h]; Water Truck [48.57 h]; Roller compactor [147.24 h]; Grader [147.24 h]; Dump Truck [589.17 h]; Aggregate Base Courses [12013.3 m3] → Skilled labor [73.6 h]; Unskilled Labor [147.2 h]; Equipment Opreator [932.32 h]; Water Truck [48.57 h]; Roller compactor [147.2 h]; Grader [147.2 h]; Dump Truck [589.17 h]; Aggregate Base Courses [12013.3 m3] |
| 1832 | **RHD4-02-002-C011-(RD)-Bituminous base course Two Layers, including (MC1)&(RC2)** | 2026-09-28 → 2026-09-17 (-11d) | 2027-12-09 → 2028-07-06 (+210d) |  |  |  |
| RHD4CZ3C011RD3100 | Supply, lay and Asphaltic base course including Prime Coat (MC1) for 1st Layer - (RD-C-1 /1)-Z3-C011-RD | 2026-09-28 → 2026-09-17 A (-11d) | 2026-09-30 → 2027-02-07 (+130d) |  | 0% → 70% | resources Skilled labor [116.96 h]; Unskilled Labor [701.77 h]; Equipment Opreator [1754.43 h]; Bobcat [116.96 h]; Roller compactor [116.96 h]; Asphalt Paver [116.96 h]; Rubber Compactor [233.92 h]; MC1/RC2 Sprinkler [116.96 h]; Dump Truck [1052.66 h]; Bituminous base course (Grading I - Class A), including Prime coat (MC1) & tack coate (RC2) [4279.18 m3] → Skilled labor [116.96 h]; Unskilled Labor [701.77 h]; Equipment Opreator [1754.4 h]; Bobcat [116.96 h]; Roller compactor [116.96 h]; Asphalt Paver [116.96 h]; Rubber Compactor [233.92 h]; MC1/RC2 Sprinkler [116.96 h]; Dump Truck [1052.66 h]; Bituminous base course (Grading I - Class A), including Prime coat (MC1) & tack coate (RC2) [4279.18 m3] |
| RHD4CZ3C011RD3200 | Supply, lay and Asphaltic base course including Tack Coat (RC2) for 2nd Layer - (RD-C-1 /1)-Z3-C011-RD | 2027-12-06 → 2028-07-03 (+210d) | 2027-12-09 → 2028-07-06 (+210d) |  |  | resources Skilled labor [116.96 h]; Unskilled Labor [701.77 h]; Equipment Opreator [1754.43 h]; Bobcat [116.96 h]; Roller compactor [116.96 h]; Asphalt Paver [116.96 h]; Rubber Compactor [233.92 h]; MC1/RC2 Sprinkler [116.96 h]; Dump Truck [1052.66 h]; Bituminous base course (Grading I - Class A), including Prime coat (MC1) & tack coate (RC2) [4279.18 m3] → Skilled labor [116.96 h]; Unskilled Labor [701.77 h]; Equipment Opreator [1754.4 h]; Bobcat [116.96 h]; Roller compactor [116.96 h]; Asphalt Paver [116.96 h]; Rubber Compactor [233.92 h]; MC1/RC2 Sprinkler [116.96 h]; Dump Truck [1052.66 h]; Bituminous base course (Grading I - Class A), including Prime coat (MC1) & tack coate (RC2) [4279.18 m3] |
| 1834 | **RHD4-02-002-C011-(RD)-Precast Concrete Curb** | 2027-12-11 → 2028-07-08 (+210d) | 2027-12-14 → 2028-07-11 (+210d) |  |  |  |
| RHD4CZ3C011RD5100 | Supply and installation Precast Concrete Kerb for Roads - (RD-C-1 /1)-Z3-C011-RD | 2027-12-11 → 2028-07-08 (+210d) | 2027-12-14 → 2028-07-11 (+210d) |  |  |  |
| 1837 | **RHD4-02-002-C011-(RD)-Traffic Signage** | 2028-01-05 → 2028-09-18 (+257d) | 2028-01-15 → 2028-09-28 (+257d) |  |  |  |
| RHD4CZ3C011RD8100 | Installation of Traffic Signage for Road Network - (RD-C-1 /1)-Z3-C011-RD | 2028-01-05 → 2028-09-18 (+257d) | 2028-01-15 → 2028-09-28 (+257d) |  |  | resources Skilled labor [196.03 h]; Unskilled Labor [98.01 h]; Electrician [44.65 h]; Equipment Opreator [37.46 h]; Boom Truck [19.6 h]; Concrete Mixer Truck [17.86 h]; Traffic signs, ground mounted, 1 Sheet Aluminium, (breakaway)Single post [12 nr]; Traffic signs, ground mounted, 2 Sheets Aluminium, (breakaway)Single post [10 nr]; Traffic signs, ground mounted, 1 Sheets Aluminium, (breakaway)Double post [3 nr] → Skilled labor [196 h]; Unskilled Labor [98.01 h]; Electrician [44.65 h]; Equipment Opreator [37.46 h]; Boom Truck [19.6 h]; Concrete Mixer Truck [17.86 h]; Traffic signs, ground mounted, 1 Sheet Aluminium, (breakaway)Single post [12 nr]; Traffic signs, ground mounted, 2 Sheets Aluminium, (breakaway)Single post [10 nr]; Traffic signs, ground mounted, 1 Sheets Aluminium, (breakaway)Double post [3 nr] |
| 1833 | **RHD4-02-002-C011-(RD)-Bituminous concrete wearing course including tack coat (RC2)** | 2027-12-15 → 2028-07-12 (+210d) | 2027-12-18 → 2028-07-15 (+210d) |  |  |  |
| RHD4CZ3C011RD4100 | Supply, lay and compaction Asphaltic wearing course including tack Coat (RC2)for Road Network - (RD-C-1 /1)-Z3-C011-RD | 2027-12-15 → 2028-07-12 (+210d) | 2027-12-18 → 2028-07-15 (+210d) |  |  |  |
| 1838 | **RHD4-02-002-C011-(RD)-Speed Table and Wheel Stopper** | 2027-12-19 → 2028-08-01 (+226d) | 2027-12-21 → 2028-08-03 (+226d) |  |  |  |
| RHD4CZ3C011RD9100 | Installation for Speed Bump for Road Network - (RD-C-1 /1)-Z3-C011-RD | 2027-12-19 → 2028-08-01 (+226d) | 2027-12-21 → 2028-08-03 (+226d) |  |  |  |
| 1836 | **RHD4-02-002-C011-(RD)-Pavement Marking** | 2027-12-22 → 2028-08-05 (+227d) | 2027-12-26 → 2028-08-08 (+226d) |  |  |  |
| RHD4CZ3C011RD7100 | Pavement Markings for Road Network - (RD-C-1 /1)-Z3-C011-RD | 2027-12-22 → 2028-08-05 (+227d) | 2027-12-26 → 2028-08-08 (+226d) |  |  |  |
| 4299 | **RHD4-02-002-Z3-C011-Concrete Box Culvert - ST** | 2026-12-31 → 2026-08-29 (-124d) | 2027-02-14 → 2027-09-04 (+202d) |  |  |  |
| 4300 | **RHD4-02-002-C011-(ST)-Concrete Box Culvert** | 2026-12-31 → 2026-08-29 (-124d) | 2027-02-14 → 2027-09-04 (+202d) |  |  |  |
| RHD4CZ3C011ST4100 | Excavation works for Box Culvert - (RD-C-1/1)-Z3-C011-ST | 2026-12-31 → 2026-08-29 A (-124d) | 2027-01-07 → 2027-07-24 (+198d) |  | 0% → 60% |  |
| RHD4CZ3C011ST4200 | PC works for Box Culvert - (RD-C-1/1)-Z3-C011-ST | 2027-01-09 → 2026-09-10 A (-121d) | 2027-01-11 → 2027-08-05 (+206d) |  | 0% → 60% |  |
| RHD4CZ3C011ST4400 | Raft works for Box Culvert - (RD-C-1/1)-Z3-C011-ST | 2027-01-12 → 2026-09-13 A (-121d) | 2027-01-19 → 2027-08-09 (+202d) |  | 0% → 60% |  |
| RHD4CZ3C011ST4500 | Wall and slab works for Box Culvert - (RD-C-1/1)-Z3-C011-ST | 2027-01-20 → 2026-09-16 A (-126d) | 2027-01-27 → 2027-08-12 (+197d) |  | 0% → 60% |  |
| RHD4CZ3C011ST4700 | Backfilling works for Box Culvert - (RD-C-1/1)-Z3-C011-ST | 2027-01-28 → 2027-08-14 (+198d) | 2027-02-04 → 2027-08-25 (+202d) | 7d → 11d |  |  |
| RHD4CZ3C011ST4600 | Insulation and Testing for Box Culvert - (RD-C-1/1)-Z3-C011-ST | 2027-02-06 → 2027-08-26 (+201d) | 2027-02-14 → 2027-09-04 (+202d) |  |  |  |
| 1740 | **RHD4-02-002-Z3-C011-Potable Network - PT** | 2027-01-09 → 2026-08-29 (-133d) | 2027-02-18 → 2027-09-04 (+198d) |  |  |  |
| 1745 | **RHD4-02-002-C011-(PT)-HDPE Pipes - 450 mm diameter** | 2027-01-09 → 2027-07-25 (+197d) | 2027-02-01 → 2027-08-17 (+197d) |  |  |  |
| RHD4CZ3C011PT1104 | Excavation works for HDPE Pipline 450 mm - (RD-C-1 /1)-Z3-C011-PT | 2027-01-09 → 2027-07-25 (+197d) | 2027-01-12 → 2027-07-28 (+197d) |  |  |  |
| RHD4CZ3C011PT1204 | Bedding works for HDPE Pipline 450 mm - (RD-C-1 /1)-Z3-C011-PT | 2027-01-13 → 2027-07-29 (+197d) | 2027-01-16 → 2027-08-01 (+197d) |  |  |  |
| RHD4CZ3C011PT1304 | Installing for HDPE Pipline 450 mm - (RD-C-1 /1)-Z3-C011-PT | 2027-01-17 → 2027-08-02 (+197d) | 2027-01-21 → 2027-08-07 (+198d) |  |  |  |
| RHD4CZ3C011PT1404 | Primary Test for HDPE Pipline 450 mm - (RD-C-1 /1)-Z3-C011-PT | 2027-01-26 → 2027-08-11 (+197d) | 2027-01-27 → 2027-08-12 (+197d) |  |  |  |
| RHD4CZ3C011PT1504 | Backfilling and warning tape works for HDPE Pipline 450 mm - (RD-C-1 /1)-Z3-C011-PT | 2027-01-28 → 2027-08-14 (+198d) | 2027-02-01 → 2027-08-17 (+197d) |  |  |  |
| 1744 | **RHD4-02-002-C011-(PT)-HDPE Pipes - 400 mm diameter** | 2027-01-13 → 2026-08-29 (-137d) | 2027-01-31 → 2027-08-16 (+197d) |  |  |  |
| RHD4CZ3C011PT1103 | Excavation works for HDPE Pipline 400 mm - (RD-C-1 /1)-Z3-C011-PT | 2027-01-13 → 2026-08-29 A (-137d) | 2027-01-16 → 2027-08-01 (+197d) |  | 0% → 15% |  |
| RHD4CZ3C011PT1203 | Bedding works for HDPE Pipline 400 mm - (RD-C-1 /1)-Z3-C011-PT | 2027-01-17 → 2026-08-30 A (-140d) | 2027-01-19 → 2027-08-04 (+197d) |  | 0% → 2% |  |
| RHD4CZ3C011PT1303 | Installing for HDPE Pipline 400 mm - (RD-C-1 /1)-Z3-C011-PT | 2027-01-23 → 2026-09-02 A (-143d) | 2027-01-25 → 2027-08-10 (+197d) |  | 0% → 16% |  |
| RHD4CZ3C011PT1403 | Primary Test for HDPE Pipline 400 mm - (RD-C-1 /1)-Z3-C011-PT | 2027-01-26 → 2027-08-11 (+197d) | 2027-01-27 → 2027-08-12 (+197d) |  |  |  |
| RHD4CZ3C011PT1503 | Backfilling and warning tape works for HDPE Pipline 400 mm - (RD-C-1 /1)-Z3-C011-PT | 2027-01-28 → 2027-08-14 (+198d) | 2027-01-31 → 2027-08-16 (+197d) |  |  |  |
| 1747 | **RHD4-02-002-C011-(PT)-Butterfly Valve Chamber** | 2027-01-13 → 2027-07-29 (+197d) | 2027-01-21 → 2027-08-07 (+198d) |  |  |  |
| RHD4CZ3C011PT2100 | Excavation and Bedding for Butterfly Valve Chamber for Potable Water Network - (RD-C-1 /1)-Z3-C011-PT | 2027-01-13 → 2027-07-29 (+197d) | 2027-01-14 → 2027-07-31 (+198d) |  |  |  |
| RHD4CZ3C011PT2200 | PC works for Butterfly Valve Chamber for Potable Water Network - (RD-C-1 /1)-Z3-C011-PT | 2027-01-16 → 2027-08-01 (+197d) | 2027-01-17 → 2027-08-02 (+197d) |  |  |  |
| RHD4CZ3C011PT2300 | Installation for Butterfly Valve Chamber for Potable Water Network - (RD-C-1 /1)-Z3-C011-PT | 2027-01-18 → 2027-08-03 (+197d) | 2027-01-19 → 2027-08-04 (+197d) |  |  |  |
| RHD4CZ3C011PT2400 | Backfilling works for Butterfly Valve Chamber for Potable Water Network - (RD-C-1 /1)-Z3-C011-PT | 2027-01-20 → 2027-08-05 (+197d) | 2027-01-21 → 2027-08-07 (+198d) |  |  |  |
| 1748 | **RHD4-02-002-C011-(PT)-Butterfly Valves** | 2027-01-20 → 2027-08-05 (+197d) | 2027-01-24 → 2027-08-09 (+197d) |  |  |  |
| RHD4CZ3C011PT3101 | Installation for Butterfly Valves for Potable Water Network - (RD-C-1 /1)-Z3-C011-PT | 2027-01-20 → 2027-08-05 (+197d) | 2027-01-21 → 2027-08-07 (+198d) |  |  |  |
| RHD4CZ3C011PT3201 | Stem and Service box for Butterfly Valves for Potable Water Network - (RD-C-1 /1)-Z3-C011-PT | 2027-01-23 → 2027-08-08 (+197d) | 2027-01-24 → 2027-08-09 (+197d) |  |  |  |
| 1749 | **RHD4-02-002-C011-(PT)-Wash out Valve Chambers** | 2027-01-13 → 2027-07-29 (+197d) | 2027-01-21 → 2027-08-07 (+198d) |  |  |  |
| RHD4CZ3C011PT2101 | Excavation and Bedding for Wash out Valve Chambers for Potable Water Network - (RD-C-1 /1)-Z3-C011-PT | 2027-01-13 → 2027-07-29 (+197d) | 2027-01-14 → 2027-07-31 (+198d) |  |  |  |
| RHD4CZ3C011PT2201 | PC works for Wash out Valve Chambers for Potable Water Network - (RD-C-1 /1)-Z3-C011-PT | 2027-01-16 → 2027-08-01 (+197d) | 2027-01-17 → 2027-08-02 (+197d) |  |  |  |
| RHD4CZ3C011PT2301 | Installation for Wash out Valve Chambers for Potable Water Network - (RD-C-1 /1)-Z3-C011-PT | 2027-01-18 → 2027-08-03 (+197d) | 2027-01-19 → 2027-08-04 (+197d) |  |  |  |
| RHD4CZ3C011PT2401 | Backfilling works for Wash out Valve Chambers for Potable Water Network - (RD-C-1 /1)-Z3-C011-PT | 2027-01-20 → 2027-08-05 (+197d) | 2027-01-21 → 2027-08-07 (+198d) |  |  |  |
| 1750 | **RHD4-02-002-C011-(PT)-Wash out Valves** | 2027-01-20 → 2027-08-05 (+197d) | 2027-01-24 → 2027-08-09 (+197d) |  |  |  |
| RHD4CZ3C011PT3102 | Installation for Wash out Valves for Potable Water Network - (RD-C-1 /1)-Z3-C011-PT | 2027-01-20 → 2027-08-05 (+197d) | 2027-01-21 → 2027-08-07 (+198d) |  |  |  |
| RHD4CZ3C011PT3202 | Stem and Service box for Wash out Valves for Potable Water Network - (RD-C-1 /1)-Z3-C011-PT | 2027-01-23 → 2027-08-08 (+197d) | 2027-01-24 → 2027-08-09 (+197d) |  |  |  |
| 1751 | **RHD4-02-002-C011-(PT)-Air Valve Chambers** | 2027-01-13 → 2027-07-29 (+197d) | 2027-01-21 → 2027-08-07 (+198d) |  |  |  |

| ID | Task | Start | Finish | Duration | Complete | Other |
| --- | --- | --- | --- | --- | --- | --- |
| RHD4CZ3C011PT2102 | Excavation and Bedding for Air Valve Chambers for Potable Water Network - (RD-C-1 /1)-Z3-C011-PT | 2027-01-13 → 2027-07-29 (+197d) | 2027-01-14 → 2027-07-31 (+198d) |  |  |  |
| RHD4CZ3C011PT2202 | PC works for Air Valve Chambers for Potable Water Network - (RD-C-1 /1)-Z3-C011-PT | 2027-01-16 → 2027-08-01 (+197d) | 2027-01-17 → 2027-08-02 (+197d) |  |  |  |
| RHD4CZ3C011PT2302 | Installation for Air Valve Chambers for Potable Water Network - (RD-C-1 /1)-Z3-C011-PT | 2027-01-18 → 2027-08-03 (+197d) | 2027-01-19 → 2027-08-04 (+197d) |  |  |  |
| RHD4CZ3C011PT2402 | Backfilling works for Air Valve Chambers for Potable Water Network - (RD-C-1 /1)-Z3-C011-PT | 2027-01-20 → 2027-08-05 (+197d) | 2027-01-21 → 2027-08-07 (+198d) |  |  |  |
| 1752 | **RHD4-02-002-C011-(PT)-Air Valves** | 2027-01-20 → 2027-08-05 (+197d) | 2027-01-24 → 2027-08-09 (+197d) |  |  |  |
| RHD4CZ3C011PT3103 | Installation for Air Valves for Potable Water Network - (RD-C-1 /1)-Z3-C011-PT | 2027-01-20 → 2027-08-05 (+197d) | 2027-01-21 → 2027-08-07 (+198d) |  |  |  |
| RHD4CZ3C011PT3203 | Stem and Service box for Air Valves for Potable Water Network - (RD-C-1 /1)-Z3-C011-PT | 2027-01-23 → 2027-08-08 (+197d) | 2027-01-24 → 2027-08-09 (+197d) |  |  |  |
| 1753 | **RHD4-02-002-C011-(PT)-Fire Hydrant** | 2027-02-02 → 2027-08-18 (+197d) | 2027-02-18 → 2027-09-04 (+198d) |  |  |  |
| RHD4CZ3C011PT4100 | Excavation and Bedding and Pipe Installation for Fire Hydrant - (RD-C-1 /1)-Z3-C011-PT | 2027-02-02 → 2027-08-18 (+197d) | 2027-02-06 → 2027-08-22 (+197d) |  |  |  |
| RHD4CZ3C011PT4200 | Valve Installation for Fire Hydrant - (RD-C-1 /1)-Z3-C011-PT | 2027-02-07 → 2027-08-23 (+197d) | 2027-02-09 → 2027-08-25 (+197d) |  |  |  |
| RHD4CZ3C011PT4300 | Stem for Fire Hydrant - (RD-C-1 /1)-Z3-C011-PT | 2027-02-10 → 2027-08-26 (+197d) | 2027-02-13 → 2027-08-29 (+197d) |  |  |  |
| RHD4CZ3C011PT4400 | Fire Installation for Fire Hydrant - (RD-C-1 /1)-Z3-C011-PT | 2027-02-14 → 2027-08-30 (+197d) | 2027-02-16 → 2027-09-01 (+197d) |  |  |  |
| RHD4CZ3C011PT4500 | Protection Barriers for Fire Hydrant - (RD-C-1 /1)-Z3-C011-PT | 2027-02-17 → 2027-09-02 (+197d) | 2027-02-18 → 2027-09-04 (+198d) |  |  |  |
| 1754 | **RHD4-02-002-C011-(PT)-Concrete Encasement** | 2027-01-23 → 2027-08-08 (+197d) | 2027-01-25 → 2027-08-10 (+197d) |  |  |  |
| RHD4CZ3C011PT5100 | Pipe Encasement for Potable Pipelines - (RD-C-1 /1)-Z3-C011-PT | 2027-01-23 → 2027-08-08 (+197d) | 2027-01-25 → 2027-08-10 (+197d) |  |  |  |
| 1755 | **RHD4-02-002-Z3-C011-Irrigation Network - IRR** | 2027-02-01 → 2026-08-29 (-156d) | 2027-04-13 → 2027-10-26 (+196d) |  |  |  |
| 1770 | **RHD4-02-002-C011-(IRR)-Air Valves** | 2027-02-23 → 2027-09-09 (+198d) | 2027-02-27 → 2027-09-13 (+198d) |  |  |  |
| RHD4CZ3C011IRR3103 | Installation for Air Valves for Irrigation Network - (RD-C-1 /1)-Z3-C011-IRR | 2027-02-23 → 2027-09-09 (+198d) | 2027-02-24 → 2027-09-11 (+199d) |  |  |  |
| RHD4CZ3C011IRR3203 | Stem and Service box for Air Valves for Irrigation Network - (RD-C-1 /1)-Z3-C011-IRR | 2027-02-25 → 2027-09-12 (+199d) | 2027-02-27 → 2027-09-13 (+198d) |  |  |  |
| 6107 | **RHD4-02-002-C011-(IRR)-HDPE Pipes - 160 mm diameter** | 2027-02-10 → 2026-08-29 (-165d) | 2027-02-21 → 2027-09-08 (+199d) |  |  |  |
| RHD4CZ3C011IRR1100 | Excavation works for HDPE Pipline 160 mm - (RD-C-1 /1)-Z3-C011-IRR | 2027-02-10 → 2026-08-29 A (-165d) | 2027-02-11 → 2027-08-30 (+200d) |  | 0% → 7% |  |
| RHD4CZ3C011IRR1200 | Bedding works for HDPE Pipline 160 mm - (RD-C-1 /1)-Z3-C011-IRR | 2027-02-13 → 2026-08-30 A (-167d) | 2027-02-14 → 2027-09-01 (+199d) |  | 0% → 7% |  |
| RHD4CZ3C011IRR1300 | Installing for HDPE Pipline 160 mm - (RD-C-1 /1)-Z3-C011-IRR | 2027-02-15 → 2026-08-31 A (-168d) | 2027-02-16 → 2027-09-04 (+200d) |  | 0% → 7% |  |
| RHD4CZ3C011IRR1400 | Primary Test for HDPE Pipline 160 mm - (RD-C-1 /1)-Z3-C011-IRR | 2027-02-17 → 2027-09-05 (+200d) | 2027-02-18 → 2027-09-06 (+200d) |  |  |  |
| RHD4CZ3C011IRR1500 | Backfilling and warning tape works for HDPE Pipline 160 mm - (RD-C-1 /1)-Z3-C011-IRR | 2027-02-20 → 2027-09-07 (+199d) | 2027-02-21 → 2027-09-08 (+199d) |  |  |  |
| 6111 | **RHD4-02-002-C011-(IRR)-HDPE Pipes - 315 mm diameter** | 2027-02-01 → 2026-08-29 (-156d) | 2027-04-04 → 2027-10-17 (+196d) |  |  |  |
| RHD4CZ3C011IRR1104 | Excavation works for HDPE Pipline 315 mm - (RD-C-1 /1)-Z3-C011-IRR | 2027-02-01 → 2026-08-29 A (-156d) | 2027-02-09 → 2027-08-28 (+200d) |  | 0% → 4% |  |
| RHD4CZ3C011IRR1204 | Bedding works for HDPE Pipline 315 mm - (RD-C-1 /1)-Z3-C011-IRR | 2027-02-10 → 2026-08-30 A (-164d) | 2027-02-21 → 2027-09-08 (+199d) |  | 0% → 4% |  |
| RHD4CZ3C011IRR1304 | Installing for HDPE Pipline 315 mm - (RD-C-1 /1)-Z3-C011-IRR | 2027-02-23 → 2026-08-31 A (-176d) | 2027-03-16 → 2027-09-28 (+196d) |  | 0% → 4% |  |
| RHD4CZ3C011IRR1404 | Primary Test for HDPE Pipline 315 mm - (RD-C-1 /1)-Z3-C011-IRR | 2027-03-17 → 2027-09-29 (+196d) | 2027-03-23 → 2027-10-05 (+196d) |  |  |  |
| RHD4CZ3C011IRR1504 | Backfilling and warning tape works for HDPE Pipline 315 mm - (RD-C-1 /1)-Z3-C011-IRR | 2027-03-24 → 2027-10-06 (+196d) | 2027-04-04 → 2027-10-17 (+196d) |  |  |  |
| 6115 | **RHD4-02-002-C011-(IRR)-Gate Valves (Direct Buried)** | 2027-04-05 → 2027-10-18 (+196d) | 2027-04-13 → 2027-10-26 (+196d) |  |  |  |
| RHD4CZ3C011IRR3100 | Installation for Direct Buried Gate Valves - (RD-C-1 /1)-Z3-C011-IRR | 2027-04-05 → 2027-10-18 (+196d) | 2027-04-08 → 2027-10-21 (+196d) |  |  |  |
| RHD4CZ3C011IRR3200 | Stem and Service box for Direct Buried Gate Valves - (RD-C-1 /1)-Z3-C011-IRR | 2027-04-10 → 2027-10-23 (+196d) | 2027-04-13 → 2027-10-26 (+196d) |  |  |  |
| 6116 | **RHD4-02-002-C011-(IRR)-Butterfly Valve Chamber** | 2027-02-23 → 2027-09-09 (+198d) | 2027-03-03 → 2027-09-18 (+199d) |  |  |  |
| RHD4CZ3C011IRR2100 | Excavation and Bedding for Butterfly Valve Chamber for Irrigation Network - (RD-C-1 /1)-Z3-C011-IRR | 2027-02-23 → 2027-09-09 (+198d) | 2027-02-24 → 2027-09-11 (+199d) |  |  |  |
| RHD4CZ3C011IRR2200 | PC works for Butterfly Valve Chamber for Irrigation Network - (RD-C-1 /1)-Z3-C011-IRR | 2027-02-25 → 2027-09-12 (+199d) | 2027-02-27 → 2027-09-13 (+198d) |  |  |  |
| RHD4CZ3C011IRR2300 | Installation for Butterfly Valve Chamber for Irrigation Network - (RD-C-1 /1)-Z3-C011-IRR | 2027-02-28 → 2027-09-14 (+198d) | 2027-03-01 → 2027-09-15 (+198d) |  |  |  |
| RHD4CZ3C011IRR2400 | Backfilling works for Butterfly Valve Chamber for Irrigation Network - (RD-C-1 /1)-Z3-C011-IRR | 2027-03-02 → 2027-09-16 (+198d) | 2027-03-03 → 2027-09-18 (+199d) |  |  |  |
| 6117 | **RHD4-02-002-C011-(IRR)-Butterfly Valves** | 2027-03-02 → 2027-09-16 (+198d) | 2027-03-06 → 2027-09-20 (+198d) |  |  |  |
| RHD4CZ3C011IRR3101 | Installation for Butterfly Valves for Irrigation Network - (RD-C-1 /1)-Z3-C011-IRR | 2027-03-02 → 2027-09-16 (+198d) | 2027-03-03 → 2027-09-18 (+199d) |  |  |  |
| RHD4CZ3C011IRR3201 | Stem and Service box for Butterfly Valves for Irrigation Network - (RD-C-1 /1)-Z3-C011-IRR | 2027-03-04 → 2027-09-19 (+199d) | 2027-03-06 → 2027-09-20 (+198d) |  |  |  |
| 6685 | **RHD4-02-002-C011-(IRR)-Wash out Chamber** | 2027-02-13 → 2027-08-31 (+199d) | 2027-02-21 → 2027-09-08 (+199d) |  |  |  |
| RHD4CZ3C011IRR2101 | Excavation and Bedding for Wash out Chamber for Irrigation Network - (RD-C-1 /1)-Z3-C011-IRR | 2027-02-13 → 2027-08-31 (+199d) | 2027-02-14 → 2027-09-01 (+199d) |  |  |  |
| RHD4CZ3C011IRR2201 | PC works for Wash out Chamber for Irrigation Network - (RD-C-1 /1)-Z3-C011-IRR | 2027-02-15 → 2027-09-02 (+199d) | 2027-02-16 → 2027-09-04 (+200d) |  |  |  |
| RHD4CZ3C011IRR2301 | Installation for Wash out Chamber for Irrigation Network - (RD-C-1 /1)-Z3-C011-IRR | 2027-02-17 → 2027-09-05 (+200d) | 2027-02-18 → 2027-09-06 (+200d) |  |  |  |
| RHD4CZ3C011IRR2401 | Backfilling works for Wash out Chamber for Irrigation Network - (RD-C-1 /1)-Z3-C011-IRR | 2027-02-20 → 2027-09-07 (+199d) | 2027-02-21 → 2027-09-08 (+199d) |  |  |  |
| 6686 | **RHD4-02-002-C011-(IRR)-Wash out Valves** | 2027-02-20 → 2027-09-07 (+199d) | 2027-02-24 → 2027-09-11 (+199d) |  |  |  |
| RHD4CZ3C011IRR3102 | Installation for Wash out Valve for Irrigation Network - (RD-C-1 /1)-Z3-C011-IRR | 2027-02-20 → 2027-09-07 (+199d) | 2027-02-21 → 2027-09-08 (+199d) |  |  |  |
| RHD4CZ3C011IRR3202 | Stem and Service box for Wash out Valve for Irrigation Network - (RD-C-1 /1)-Z3-C011-IRR | 2027-02-23 → 2027-09-09 (+198d) | 2027-02-24 → 2027-09-11 (+199d) |  |  |  |
| 1769 | **RHD4-02-002-C011-(IRR)-Air Valve Chamber** | 2027-02-13 → 2027-08-31 (+199d) | 2027-02-21 → 2027-09-08 (+199d) |  |  |  |
| RHD4CZ3C011IRR2102 | Excavation and Bedding for Valve Chamber for Irrigation Network - (RD-C-1 /1)-Z3-C011-IRR | 2027-02-13 → 2027-08-31 (+199d) | 2027-02-14 → 2027-09-01 (+199d) |  |  |  |
| RHD4CZ3C011IRR2202 | PC works for Valve Chamber for Irrigation Network - (RD-C-1 /1)-Z3-C011-IRR | 2027-02-15 → 2027-09-02 (+199d) | 2027-02-16 → 2027-09-04 (+200d) |  |  |  |
| RHD4CZ3C011IRR2302 | Installation for Valve Chamber for Irrigation Network - (RD-C-1 /1)-Z3-C011-IRR | 2027-02-17 → 2027-09-05 (+200d) | 2027-02-18 → 2027-09-06 (+200d) |  |  |  |
| RHD4CZ3C011IRR2402 | Backfilling works for Valve Chamber for Irrigation Network - (RD-C-1 /1)-Z3-C011-IRR | 2027-02-20 → 2027-09-07 (+199d) | 2027-02-21 → 2027-09-08 (+199d) |  |  |  |
| 1789 | **RHD4-02-002-Z3-C011-Medium Voltage Network - MV** | 2026-09-13 → 2027-01-21 (+130d) | 2027-02-17 → 2027-08-26 (+190d) |  |  |  |
| 1790 | **RHD4-02-002-C011-(MV)-Medium Voltage cable trench** | 2027-01-07 → 2027-06-24 (+168d) | 2027-02-03 → 2027-08-09 (+187d) |  |  |  |
| RHD4CZ3C011MV1100 | Excavation for Medium Voltage Trench - (RD-C-1 /1)-Z3-C011-MV | 2027-01-07 → 2027-06-24 (+168d) | 2027-01-12 → 2027-07-07 (+176d) | 5d → 12d |  | resources Skilled labor [68.5 h]; Unskilled Labor [137.11 h]; Equipment Opreator [205.61 h]; Excavator-Poclain [68.5 h]; Dump Truck [137.11 h]; Excavation for Trench size 60cm wide and 80cm deep ( for 2 cables) [16.71 m3]; Excavation for Trench size 180cm wide and 80cm deep (for 6 cables) [1525.5 m3] → Skilled labor [68.5 h]; Unskilled Labor [137.11 h]; Equipment Opreator [205.6 h]; Excavator-Poclain [68.5 h]; Dump Truck [137.11 h]; Excavation for Trench size 60cm wide and 80cm deep ( for 2 cables) [16.71 m3]; Excavation for Trench size 180cm wide and 80cm deep (for 6 cables) [1525.5 m3] |
| RHD4CZ3C011MV1200 | Trench Backfilling for Medium Voltage Network - (RD-C-1 /1)-Z3-C011-MV | 2027-01-27 → 2027-08-02 (+187d) | 2027-02-03 → 2027-08-09 (+187d) |  |  |  |
| 1791 | **RHD4-02-002-C011-(MV)-Medium Voltage duct banks** | 2026-09-13 → 2027-01-21 (+130d) | 2026-09-27 → 2027-02-03 (+129d) |  |  |  |
| RHD4CZ3C011MV2100 | Excavation of Duct Banks for Medium Voltage Network - (RD-C-1 /1)-Z3-C011-MV | 2026-09-13 → 2027-01-21 (+130d) | 2026-09-15 → 2027-01-24 (+131d) |  |  |  |
| RHD4CZ3C011MV2200 | Installation of Duct Banks for Medium Voltage Network - (RD-C-1 /1)-Z3-C011-MV | 2026-09-16 → 2027-01-25 (+131d) | 2026-09-20 → 2027-01-28 (+130d) |  |  |  |
| RHD4CZ3C011MV2300 | Pouring of Duct Banks for Medium Voltage Network - (RD-C-1 /1)-Z3-C011-MV | 2026-09-21 → 2027-01-30 (+131d) | 2026-09-24 → 2027-02-01 (+130d) |  |  |  |
| RHD4CZ3C011MV2400 | Backfilling of Duct Banks for Medium Voltage Network - (RD-C-1 /1)-Z3-C011-MV | 2026-09-26 → 2027-02-02 (+129d) | 2026-09-27 → 2027-02-03 (+129d) |  |  |  |
| 1792 | **RHD4-02-002-C011-(MV)-Medium Voltage cables 3Cx 500 mm²** | 2027-01-13 → 2027-07-08 (+176d) | 2027-02-17 → 2027-08-26 (+190d) |  |  |  |
| RHD4CZ3C011MV3100 | Installation of Medium Voltage Cables 3Cx 500 mm² - (RD-C-1 /1)-Z3-C011-MV | 2027-01-13 → 2027-07-08 (+176d) | 2027-01-16 → 2027-07-21 (+186d) | 3d → 12d |  |  |
| RHD4CZ3C011MV3200 | Joints Installation of Medium Voltage Cables 3Cx 500 mm² - (RD-C-1 /1)-Z3-C011-MV | 2027-01-17 → 2027-07-22 (+186d) | 2027-01-26 → 2027-08-01 (+187d) |  |  |  |
| RHD4CZ3C011MV3300 | Testing of Medium Voltage Cables 3Cx 500 mm² - (RD-C-1 /1)-Z3-C011-MV | 2027-02-04 → 2027-08-10 (+187d) | 2027-02-14 → 2027-08-24 (+191d) | 9d → 13d |  |  |
| RHD4CZ3C011MV3400 | Termination of Medium Voltage Cables 3Cx 500 mm² - (RD-C-1 /1)-Z3-C011-MV | 2027-02-15 → 2027-08-25 (+191d) | 2027-02-17 → 2027-08-26 (+190d) | 3d → 2d |  |  |
| 1793 | **RHD4-02-002-C011-(MV)-Medium Voltage cables 3Cx 50 mm²** | 2027-01-13 → 2027-07-08 (+176d) | 2027-02-13 → 2027-08-18 (+186d) |  |  |  |

| ID | Task | Start | Finish | Duration | Complete | Other |
| --- | --- | --- | --- | --- | --- | --- |
| RHD4CZ3C011MV3101 | Installation of Medium Voltage Cables 3Cx 50 mm² - (RD-C-1 /1)-Z3-C011-MV | 2027-01-13 → 2027-07-08 (+176d) | 2027-01-14 → 2027-07-10 (+177d) |  |  |  |
| RHD4CZ3C011MV3301 | Testing of Medium Voltage Cables 3Cx 50 mm² - (RD-C-1 /1)-Z3-C011-MV | 2027-02-04 → 2027-08-10 (+187d) | 2027-02-06 → 2027-08-11 (+186d) |  |  |  |
| RHD4CZ3C011MV3401 | Termination of Medium Voltage Cables 3Cx 50 mm² - (RD-C-1 /1)-Z3-C011-MV | 2027-02-11 → 2027-08-17 (+187d) | 2027-02-13 → 2027-08-18 (+186d) |  |  |  |
| 1794 | **RHD4-02-002-C011-(MV)-Normally open Point (Outdoor Type)** | 2027-01-14 → 2027-07-20 (+187d) | 2027-01-18 → 2027-07-24 (+187d) |  |  |  |
| RHD4CZ3C011MV4100 | Installation for Normally open Point - (RD-C-1 /1)-Z3-C011-MV | 2027-01-14 → 2027-07-20 (+187d) | 2027-01-16 → 2027-07-21 (+186d) |  |  |  |
| RHD4CZ3C011MV4200 | Termination for Normally open Point - (RD-C-1 /1)-Z3-C011-MV | 2027-01-17 → 2027-07-22 (+186d) | 2027-01-18 → 2027-07-24 (+187d) |  |  |  |
| 1795 | **RHD4-02-002-C011-(MV)-Unit Substations** | 2027-01-27 → 2027-08-02 (+187d) | 2027-02-10 → 2027-08-16 (+187d) |  |  |  |
| RHD4CZ3C011MV5100 | Excavation for Unit Substations for Medium Voltage Network - (RD-C-1 /1)-Z3-C011-MV | 2027-01-27 → 2027-08-02 (+187d) | 2027-01-28 → 2027-08-03 (+187d) |  |  |  |
| RHD4CZ3C011MV5200 | Concrete Base Placement for Unit Substations for Medium Voltage Network - (RD-C-1 /1)-Z3-C011-MV | 2027-01-30 → 2027-08-04 (+186d) | 2027-01-31 → 2027-08-05 (+186d) |  |  |  |
| RHD4CZ3C011MV5300 | Installation for Fences and doors for Medium Voltage Network - (RD-C-1 /1)-Z3-C011-MV | 2027-02-01 → 2027-08-07 (+187d) | 2027-02-06 → 2027-08-11 (+186d) |  |  |  |
| RHD4CZ3C011MV5400 | Installation for Unit Substations for Medium Voltage Network - (RD-C-1 /1)-Z3-C011-MV | 2027-02-07 → 2027-08-12 (+186d) | 2027-02-10 → 2027-08-16 (+187d) |  |  |  |
| 1796 | **RHD4-02-002-Z3-C011-Low Voltage Network - LV** | 2027-01-27 → 2027-08-10 (+195d) | 2027-02-27 → 2027-09-08 (+193d) |  |  |  |
| 1797 | **RHD4-02-002-C011-(LV)-Low Voltage duct banks** | 2027-01-27 → 2027-08-10 (+195d) | 2027-02-09 → 2027-08-23 (+195d) |  |  |  |
| RHD4CZ3C011LV2100 | Excavation of Duct Banks for Low Voltage Network - (RD-C-1 /1)-Z3-C011-LV | 2027-01-27 → 2027-08-10 (+195d) | 2027-01-30 → 2027-08-12 (+194d) |  |  |  |
| RHD4CZ3C011LV2200 | Installation of Duct Banks for Low Voltage Network - (RD-C-1 /1)-Z3-C011-LV | 2027-01-31 → 2027-08-14 (+195d) | 2027-02-03 → 2027-08-17 (+195d) |  |  |  |
| RHD4CZ3C011LV2300 | Pouring of Duct Banks for Low Voltage Network - (RD-C-1 /1)-Z3-C011-LV | 2027-02-04 → 2027-08-18 (+195d) | 2027-02-07 → 2027-08-21 (+195d) |  |  | resources Skilled labor [22 h]; Unskilled Labor [22 h]; Equipment Opreator [8.82 h]; Concrete Mixer Truck [4.36 h]; Concrete Pump [4.36 h]; Duct bank for LV cables UPVC (2xø110mm) [19.7 m] → Skilled labor [22 h]; Unskilled Labor [22 h]; Equipment Opreator [8.8 h]; Concrete Mixer Truck [4.36 h]; Concrete Pump [4.36 h]; Duct bank for LV cables UPVC (2xø110mm) [19.7 m] |
| RHD4CZ3C011LV2400 | Backfilling of Duct Banks for Low Voltage Network - (RD-C-1 /1)-Z3-C011-LV | 2027-02-08 → 2027-08-22 (+195d) | 2027-02-09 → 2027-08-23 (+195d) |  |  |  |
| 1799 | **RHD4-02-002-C011-(LV)-Low Voltage cables** | 2027-02-10 → 2027-08-24 (+195d) | 2027-02-18 → 2027-09-01 (+195d) |  |  |  |
| RHD4CZ3C011LV3100 | Excavation for Low Voltage Cables for Low Voltage Network - (RD-C-1 /1)-Z3-C011-LV | 2027-02-10 → 2027-08-24 (+195d) | 2027-02-11 → 2027-08-25 (+195d) |  |  | resources Skilled labor [17.53 h]; Unskilled Labor [35.18 h]; Equipment Opreator [35.18 h]; Excavator-Poclain [17.53 h]; Boom Truck [17.53 h]; Cable, Copper 4x185mm2/ CU/XLPE/PVC [6.14 m]; Cable, Copper 4x70mm2/ CU/XLPE/PVC [72.76 m]; Cable, Copper 4x50mm2/ CU/XLPE/PVC +1x25mm2 CU/PVC [1.81 m] → Skilled labor [17.53 h]; Unskilled Labor [35.2 h]; Equipment Opreator [35.2 h]; Excavator-Poclain [17.53 h]; Boom Truck [17.53 h]; Cable, Copper 4x185mm2/ CU/XLPE/PVC [6.14 m]; Cable, Copper 4x70mm2/ CU/XLPE/PVC [72.76 m]; Cable, Copper 4x50mm2/ CU/XLPE/PVC +1x25mm2 CU/PVC [1.81 m] |
| RHD4CZ3C011LV3200 | Cable Laying of Low Voltage Cables for Low Voltage Network - (RD-C-1 /1)-Z3-C011-LV | 2027-02-13 → 2027-08-26 (+194d) | 2027-02-14 → 2027-08-28 (+195d) |  |  |  |
| RHD4CZ3C011LV3300 | Warning tape and Backfill for Low Voltage Cables for Low Voltage Network - (RD-C-1 /1)-Z3-C011-LV | 2027-02-15 → 2027-08-29 (+195d) | 2027-02-16 → 2027-08-30 (+195d) |  |  |  |
| RHD4CZ3C011LV3400 | Testing of Low Voltage Cables for Low Voltage Network - (RD-C-1 /1)-Z3-C011-LV | 2027-02-17 → 2027-08-31 (+195d) | 2027-02-18 → 2027-09-01 (+195d) |  |  | resources Skilled labor [8.82 h]; Unskilled Labor [35.18 h]; Electrician [17.53 h]; Equipment Opreator [8.82 h]; Boom Truck [8.82 h]; Cable, Copper 4x185mm2/ CU/XLPE/PVC [1.54 m]; Cable, Copper 4x70mm2/ CU/XLPE/PVC [18.19 m]; Cable, Copper 4x50mm2/ CU/XLPE/PVC +1x25mm2 CU/PVC [0.45 m] → Skilled labor [8.8 h]; Unskilled Labor [35.2 h]; Electrician [17.53 h]; Equipment Opreator [8.8 h]; Boom Truck [8.8 h]; Cable, Copper 4x185mm2/ CU/XLPE/PVC [1.54 m]; Cable, Copper 4x70mm2/ CU/XLPE/PVC [18.19 m]; Cable, Copper 4x50mm2/ CU/XLPE/PVC +1x25mm2 CU/PVC [0.45 m] |
| 1800 | **RHD4-02-002-C011-(LV)-Low Voltage Distribution Pillars** | 2027-02-20 → 2027-09-02 (+194d) | 2027-02-27 → 2027-09-08 (+193d) |  |  |  |
| RHD4CZ3C011LV4100 | Leveling for Distribution Pillars for Low Voltage Network - (RD-C-1 /1)-Z3-C011-LV | 2027-02-20 → 2027-09-02 (+194d) | 2027-02-21 → 2027-09-04 (+195d) |  |  |  |
| RHD4CZ3C011LV4200 | Lean Concrete for Distribution Pillars for Low Voltage Network - (RD-C-1 /1)-Z3-C011-LV | 2027-02-23 → 2027-09-05 (+194d) | 2027-02-24 → 2027-09-06 (+194d) |  |  |  |
| RHD4CZ3C011LV4300 | Installation of Distribution Pillars for Low Voltage Network - (RD-C-1 /1)-Z3-C011-LV | 2027-02-25 → 2027-09-07 (+194d) | 2027-02-27 → 2027-09-08 (+193d) |  |  |  |
| 1802 | **RHD4-02-002-Z3-C011-Street Lighting Network - SL** | 2027-01-31 → 2026-08-23 (-161d) | 2027-08-04 → 2028-01-17 (+166d) |  |  |  |
| 1803 | **RHD4-02-002-C011-(SL)-Street Lighting duct banks** | 2027-01-31 → 2026-08-23 (-161d) | 2027-02-17 → 2026-09-03 (-167d) |  |  |  |
| RHD4CZ3C011SL2100 | Excavation of Duct Banks for Street Lighting Network - (RD-C-1 /1)-Z3-C011-SL | 2027-01-31 → 2026-08-23 A (-161d) | 2027-02-04 → 2026-08-27 A (-161d) |  | 0% → 100% |  |
| RHD4CZ3C011SL2200 | Installation of Duct Banks for Street Lighting Network - (RD-C-1 /1)-Z3-C011-SL | 2027-02-06 → 2026-08-25 A (-165d) | 2027-02-13 → 2026-09-01 A (-165d) |  | 0% → 100% |  |
| RHD4CZ3C011SL2300 | Pouring of Duct Banks for Street Lighting Network - (RD-C-1 /1)-Z3-C011-SL | 2027-02-14 → 2026-09-01 A (-166d) | 2027-02-15 → 2026-09-02 A (-166d) |  | 0% → 100% | resources Skilled labor [50.1 h]; Unskilled Labor [50.1 h]; Equipment Opreator [20.04 h]; Concrete Mixer Truck [10.02 h]; Concrete Pump [10.02 h]; Road Crossing Duct for Street Lighting cables UPVC (2x?110mm) [36.06 m]; Road Crossing Duct for Street Lighting cables UPVC (6x?110mm) [8.82 m] → Skilled labor [50.1 h]; Unskilled Labor [50.1 h]; Equipment Opreator [20 h]; Concrete Mixer Truck [10.02 h]; Concrete Pump [10.02 h]; Road Crossing Duct for Street Lighting cables UPVC (2x?110mm) [36.06 m]; Road Crossing Duct for Street Lighting cables UPVC (6x?110mm) [8.82 m] |
| RHD4CZ3C011SL2400 | Backfilling of Duct Banks for Street Lighting Network - (RD-C-1 /1)-Z3-C011-SL | 2027-02-16 → 2026-09-02 A (-167d) | 2027-02-17 → 2026-09-03 A (-167d) |  | 0% → 100% | resources Skilled labor [37.57 h]; Unskilled Labor [37.57 h]; Equipment Opreator [15.03 h]; Excavator-Poclain [15.03 h]; Road Crossing Duct for Street Lighting cables UPVC (2x?110mm) [8.32 m]; Road Crossing Duct for Street Lighting cables UPVC (6x?110mm) [2.03 m] → Skilled labor [37.6 h]; Unskilled Labor [37.6 h]; Equipment Opreator [15.03 h]; Excavator-Poclain [15.03 h]; Road Crossing Duct for Street Lighting cables UPVC (2x?110mm) [8.32 m]; Road Crossing Duct for Street Lighting cables UPVC (6x?110mm) [2.03 m] |
| 1804 | **RHD4-02-002-C011-(SL)-Street Lighting Drawpit** | 2027-02-18 → 2027-08-28 (+191d) | 2027-02-25 → 2027-09-02 (+189d) |  |  |  |
| RHD4CZ3C011SL5100 | Excavation of Drawpit size 600x600x900mm for Street Lighting Network - (RD-C-1 /1)-Z3-C011-SL | 2027-02-18 → 2027-08-28 (+191d) | 2027-02-20 → 2027-08-29 (+190d) |  |  |  |
| RHD4CZ3C011SL5200 | Installation of Drawpit size 600x600x900mm for Street Lighting Network - (RD-C-1 /1)-Z3-C011-SL | 2027-02-21 → 2027-08-30 (+190d) | 2027-02-25 → 2027-09-02 (+189d) |  |  |  |
| 1805 | **RHD4-02-002-C011-(SL)-Street Lighting cables** | 2027-03-28 → 2027-10-23 (+209d) | 2027-07-18 → 2027-12-23 (+158d) |  |  |  |
| RHD4CZ3C011SL3100 | Excavation for Street Lighting Cables for Street Lighting Network - (RD-C-1 /1)-Z3-C011-SL | 2027-03-28 → 2027-10-23 (+209d) | 2027-04-06 → 2027-11-07 (+215d) | 9d → 14d |  |  |
| RHD4CZ3C011SL3200 | Cable Laying of Street Lighting Cables for Street Lighting Network - (RD-C-1 /1)-Z3-C011-SL | 2027-05-05 → 2027-11-08 (+187d) | 2027-05-19 → 2027-11-21 (+186d) | 9d → 12d |  |  |
| RHD4CZ3C011SL3300 | Warning tape and Backfill for Street Lighting Cables for Street Lighting Network - (RD-C-1 /1)-Z3-C011-SL | 2027-05-20 → 2027-11-22 (+186d) | 2027-05-30 → 2027-12-05 (+189d) | 9d → 12d |  |  |
| RHD4CZ3C011SL3400 | Testing of Street Lighting Cables for Street Lighting Network - (RD-C-1 /1)-Z3-C011-SL | 2027-07-11 → 2027-12-16 (+158d) | 2027-07-18 → 2027-12-23 (+158d) |  |  |  |
| 1806 | **RHD4-02-002-C011-(SL)-Street Lighting Poles** | 2027-02-28 → 2027-09-14 (+198d) | 2027-08-04 → 2028-01-17 (+166d) |  |  |  |
| RHD4CZ3C011SL1100 | Excavation for RC Base for Lighting Poles for Street Lighting Network - (RD-C-1 /1)-Z3-C011-SL | 2027-02-28 → 2027-09-14 (+198d) | 2027-03-06 → 2027-09-20 (+198d) |  |  |  |
| RHD4CZ3C011SL1200 | Installation for RC Base for Lighting Poles for Street Lighting Network - (RD-C-1 /1)-Z3-C011-SL | 2027-03-07 → 2027-09-21 (+198d) | 2027-03-16 → 2027-09-28 (+196d) |  |  |  |
| RHD4CZ3C011SL1300 | Backfill for RC Base for Lighting Poles for Street Lighting Network - (RD-C-1 /1)-Z3-C011-SL | 2027-03-17 → 2027-09-29 (+196d) | 2027-03-23 → 2027-10-05 (+196d) |  |  |  |
| RHD4CZ3C011SL1400 | Installation for Lighting Poles for Street Lighting Network - (RD-C-1 /1)-Z3-C011-SL | 2027-07-19 → 2027-12-25 (+159d) | 2027-07-28 → 2028-01-03 (+159d) |  |  |  |
| RHD4CZ3C011SL1500 | Luminaire Installation for Lighting Poles for Street Lighting Network - (RD-C-1 /1)-Z3-C011-SL | 2027-07-29 → 2028-01-04 (+159d) | 2027-08-04 → 2028-01-17 (+166d) | 6d → 12d |  | resources Unskilled Labor [258.43 h]; Electrician [129.27 h]; Equipment Opreator [51.73 h]; Boom Truck [51.73 h]; Street Lighting( LED) Luminaire of Output ?18553 lumen [178 Unit] → Unskilled Labor [258.4 h]; Electrician [129.27 h]; Equipment Opreator [51.73 h]; Boom Truck [51.73 h]; Street Lighting( LED) Luminaire of Output ?18553 lumen [178 Unit] |
| 1807 | **RHD4-02-002-C011-(SL)-Street Lighting Feeder Pillars** | 2027-05-31 → 2027-12-06 (+189d) | 2027-07-31 → 2028-01-05 (+158d) |  |  |  |
| RHD4CZ3C011SL4100 | Leveling for Distribution Pillars for Street Lighting Network - (RD-C-1 /1)-Z3-C011-SL | 2027-05-31 → 2027-12-06 (+189d) | 2027-06-01 → 2027-12-07 (+189d) |  |  |  |
| RHD4CZ3C011SL4200 | Lean Concrete for Distribution Pillars for Street Lighting Network - (RD-C-1 /1)-Z3-C011-SL | 2027-06-02 → 2027-12-08 (+189d) | 2027-06-03 → 2027-12-09 (+189d) |  |  |  |
| RHD4CZ3C011SL4300 | Installation of Distribution Pillars for Street Lighting Network - (RD-C-1 /1)-Z3-C011-SL | 2027-07-29 → 2028-01-04 (+159d) | 2027-07-31 → 2028-01-05 (+158d) |  |  |  |
| 1808 | **RHD4-02-002-C011-(SL)-Street Lighting Earthing System** | 2027-08-01 → 2028-01-06 (+158d) | 2027-08-02 → 2028-01-08 (+159d) |  |  |  |
| RHD4CZ3C011SL6100 | Installation of Earthing for Lighting Poles and Fedder Pillers for Street Lighting Network - (RD-C-1 /1)-Z3-C011-SL | 2027-08-01 → 2028-01-06 (+158d) | 2027-08-02 → 2028-01-08 (+159d) |  |  |  |
| 1814 | **RHD4-02-002-Z3-C011-Telecommunications Network - TC** | 2027-10-09 → 2026-08-25 (-410d) | 2027-12-01 → 2028-07-03 (+215d) |  |  |  |
| 1815 | **RHD4-02-002-C011-(TC)-Telecommunications Ducts** | 2027-10-09 → 2026-08-25 (-410d) | 2027-12-01 → 2028-07-03 (+215d) |  |  |  |
| RHD4CZ3C011TC2100 | Excavation of HDPE Ducts for Telecom Network - (RD-C-1 /1)-Z3-C011-TC | 2027-10-09 → 2026-08-25 A (-410d) | 2027-10-11 → 2028-04-13 (+185d) |  | 0% → 1% |  |
| RHD4CZ3C011TC2200 | Installation of HDPE Ducts for Telecom Network - (RD-C-1 /1)-Z3-C011-TC | 2027-10-12 → 2026-08-29 A (-409d) | 2027-10-14 → 2028-04-17 (+186d) |  | 0% → 1% | resources Carpenter [13.61 h]; Skilled labor [135.58 h]; Unskilled Labor [135.58 h]; Steel Fixer [13.61 h]; (6*50mm) HDPE ducts -TC [1830.01 m]; (6*50mm+2*32mm) HDPE ducts -TC [63.12 m]; (2*32mm) HDPE ducts -TC [14.17 m] → Carpenter [13.6 h]; Skilled labor [135.58 h]; Unskilled Labor [135.58 h]; Steel Fixer [13.6 h]; (6*50mm) HDPE ducts -TC [1830.01 m]; (6*50mm+2*32mm) HDPE ducts -TC [63.12 m]; (2*32mm) HDPE ducts -TC [14.17 m] |
| RHD4CZ3C011TC2400 | Backfilling of HDPE Ducts for Telecom Network - (RD-C-1 /1)-Z3-C011-TC | 2027-11-29 → 2026-09-01 A (-454d) | 2027-12-01 → 2028-07-03 (+215d) |  | 0% → 1% |  |
| 1816 | **RHD4-02-002-C011-(TC)-Telecommunications Manholes** | 2027-10-12 → 2028-04-15 (+186d) | 2027-10-28 → 2028-05-01 (+186d) |  |  |  |
| RHD4CZ3C011TC5100 | Excavation for Manholes for Telecom Network - (RD-C-1 /1)-Z3-C011-TC | 2027-10-12 → 2028-04-15 (+186d) | 2027-10-18 → 2028-04-20 (+185d) |  |  |  |
| RHD4CZ3C011TC5200 | Installation of Manholes for Telecom Network - (RD-C-1 /1)-Z3-C011-TC | 2027-10-19 → 2028-04-22 (+186d) | 2027-10-28 → 2028-05-01 (+186d) |  |  |  |
| 1818 | **RHD4-02-002-Z3-C011-Information and Communication Technologies - ICT** | 2027-02-20 → 2026-08-25 (-179d) | 2027-11-18 → 2028-06-21 (+216d) |  |  |  |
| 1819 | **RHD4-02-002-C011-(ICT)-Information and Communication Technologies Ducts** | 2027-10-12 → 2028-04-15 (+186d) | 2027-11-18 → 2028-06-21 (+216d) |  |  |  |
| RHD4CZ3C011ICT2100 | Excavation of HDPE Ducts for ICT Network - (RD-C-1 /1)-Z3-C011-ICT | 2027-10-12 → 2028-04-15 (+186d) | 2027-10-16 → 2028-05-02 (+199d) | 4d → 16d |  |  |
| RHD4CZ3C011ICT2200 | Installation of HDPE Ducts for ICT Network - (RD-C-1 /1)-Z3-C011-ICT | 2027-10-17 → 2028-05-03 (+199d) | 2027-10-26 → 2028-06-03 (+221d) | 9d → 24d |  | resources Carpenter [19.17 h]; Skilled labor [191.13 h]; Unskilled Labor [191.13 h]; Steel Fixer [19.17 h]; (2*50mm) HDPE ducts -ICT [3316.33 m]; (2*50mm+2*32mm) HDPE ducts -ICT [96.36 m]; (2*32mm) HDPE ducts -ICT [9.57 m] → Carpenter [19.2 h]; Skilled labor [191.13 h]; Unskilled Labor [191.13 h]; Steel Fixer [19.2 h]; (2*50mm) HDPE ducts -ICT [3316.33 m]; (2*50mm+2*32mm) HDPE ducts -ICT [96.36 m]; (2*32mm) HDPE ducts -ICT [9.57 m] |
| RHD4CZ3C011ICT2400 | Backfilling of HDPE Ducts for ICT Network - (RD-C-1 /1)-Z3-C011-ICT | 2027-11-14 → 2028-06-04 (+203d) | 2027-11-18 → 2028-06-21 (+216d) | 5d → 16d |  |  |
| 1820 | **RHD4-02-002-C011-(ICT)-Information and Communication Technologies Manholes** | 2027-10-17 → 2028-05-03 (+199d) | 2027-11-13 → 2028-06-03 (+203d) |  |  |  |
| RHD4CZ3C011ICT5100 | Excavation for Manholes for ICT Network - (RD-C-1 /1)-Z3-C011-ICT | 2027-10-17 → 2028-05-03 (+199d) | 2027-10-30 → 2028-05-20 (+203d) |  |  |  |
| RHD4CZ3C011ICT5200 | Installation of Manholes for ICT Network - (RD-C-1 /1)-Z3-C011-ICT | 2027-10-31 → 2028-05-21 (+203d) | 2027-11-13 → 2028-06-03 (+203d) |  |  |  |
| 1821 | **RHD4-02-002-C011-(ICT)-Information and Communication Technologies Road Crossings** | 2027-02-20 → 2026-08-25 (-179d) | 2027-03-01 → 2026-09-03 (-179d) |  |  |  |
| RHD4CZ3C011ICT3100 | Excavation for Road Crossings for ICT Network - (RD-C-1 /1)-Z3-C011-ICT | 2027-02-20 → 2026-08-25 A (-179d) | 2027-02-21 → 2026-08-26 A (-179d) |  | 0% → 100% |  |

| ID | Task | Start | Finish | Duration | Complete | Other |
| --- | --- | --- | --- | --- | --- | --- |
| RHD4CZ3C011ICT3200 | Installation of Road Crossings for ICT Network - (RD-C-1 /1)-Z3-C011-ICT | 2027-02-23 → 2026-08-29 A (-178d) | 2027-02-24 → 2026-08-30 A (-178d) |  | 0% → 100% |  |
| RHD4CZ3C011ICT3300 | Pouring of Road Crossings for ICT Network - (RD-C-1 /1)-Z3-C011-ICT | 2027-02-25 → 2026-09-01 A (-177d) | 2027-02-27 → 2026-09-02 A (-178d) |  | 0% → 100% |  |
| RHD4CZ3C011ICT3400 | Backfilling of Road Crossings for ICT Network - (RD-C-1 /1)-Z3-C011-ICT | 2027-02-28 → 2026-09-02 A (-179d) | 2027-03-01 → 2026-09-03 A (-179d) |  | 0% → 100% |  |
| 1822 | **RHD4-02-002-Z3-C011-Security Network - CCTV** | 2027-08-19 → 2028-02-01 (+166d) | 2027-12-05 → 2028-07-02 (+210d) |  |  |  |
| 1823 | **RHD4-02-002-C011-(CCTV)-Civil Works** | 2027-08-19 → 2028-02-01 (+166d) | 2027-08-28 → 2028-02-09 (+165d) |  |  |  |
| RHD4CZ3C011CCTV2100 | Civil Works for Security Network - (RD-C-1 /1)-Z3-C011-CCTV | 2027-08-19 → 2028-02-01 (+166d) | 2027-08-28 → 2028-02-09 (+165d) |  |  |  |
| 4851 | **RHD4-02-002-C011-(CCTV)-CCTV Poles** | 2027-11-13 → 2028-04-09 (+148d) | 2027-11-30 → 2028-06-06 (+189d) |  |  |  |
| RHD4CZ3C011CCTV1100 | Excavation for RC Base for CCTV Poles for Security Network - (RD-C-1 /1)-Z3-C011-CCTV | 2027-11-13 → 2028-04-09 (+148d) | 2027-11-14 → 2028-04-10 (+148d) |  |  |  |
| RHD4CZ3C011CCTV1200 | Installation for RC Base for CCTV Poles for Security Network - (RD-C-1 /1)-Z3-C011-CCTV | 2027-11-15 → 2028-05-21 (+188d) | 2027-11-16 → 2028-05-22 (+188d) |  |  |  |
| RHD4CZ3C011CCTV1300 | Backfill for RC Base for CCTV Poles for Security Network - (RD-C-1 /1)-Z3-C011-CCTV | 2027-11-17 → 2028-05-23 (+188d) | 2027-11-18 → 2028-05-24 (+188d) |  |  |  |
| RHD4CZ3C011CCTV1400 | Installation for CCTV Poles for Security Network - (RD-C-1 /1)-Z3-C011-CCTV | 2027-11-24 → 2028-05-31 (+189d) | 2027-11-25 → 2028-06-01 (+189d) |  |  |  |
| RHD4CZ3C011CCTV1500 | Protection post Installation for CCTV Poles for Security Network - (RD-C-1 /1)-Z3-C011-CCTV | 2027-11-27 → 2028-06-03 (+189d) | 2027-11-30 → 2028-06-06 (+189d) |  |  |  |
| 4852 | **RHD4-02-002-C011-(CCTV)-Camera** | 2027-11-29 → 2028-06-06 (+190d) | 2027-11-30 → 2028-06-07 (+190d) |  |  |  |
| RHD4CZ3C011CCTV3100 | Installation for Cameras for Security Network - (RD-C-1 /1)-Z3-C011-CCTV | 2027-11-29 → 2028-06-06 (+190d) | 2027-11-30 → 2028-06-07 (+190d) |  |  |  |
| 4853 | **RHD4-02-002-C011-(CCTV)-Power and Infrastructure** | 2027-11-27 → 2028-06-04 (+190d) | 2027-11-30 → 2028-06-24 (+207d) |  |  |  |
| RHD4CZ3C011CCTV4100 | Installation of Power outlet, UPS and midspan for PTZ Camerafor Cameras for Security Network - (RD-C-1 /1)-Z3-C011-CCTV | 2027-11-27 → 2028-06-04 (+190d) | 2027-11-28 → 2028-06-05 (+190d) |  |  |  |
| RHD4CZ3C011CCTV4200 | Short Range Wireless PoP wireless Bridgefor CCTV Poles for Security Network - (RD-C-8 /3)-Z3-C083-CCTV | 2027-11-29 → 2028-06-22 (+206d) | 2027-11-30 → 2028-06-24 (+207d) |  |  | resources Skilled labor [21.76 h]; Unskilled Labor [43.52 h]; Electrician [21.76 h]; Equipment Opreator [43.52 h]; Excavator-Poclain [10.89 h]; Dump Truck [10.89 h]; Short Range wireless point to point wireless bridge [4 nr] → Skilled labor [21.76 h]; Unskilled Labor [43.52 h]; Electrician [21.76 h]; Equipment Opreator [43.52 h]; Excavator-Poclain [10.88 h]; Dump Truck [10.88 h]; Short Range wireless point to point wireless bridge [4 nr] |
| 4855 | **RHD4-02-002-C011-(CCTV)-CCTV Panels and Components** | 2027-12-01 → 2028-06-25 (+207d) | 2027-12-05 → 2028-07-02 (+210d) |  |  |  |
| RHD4CZ3C011CCTV6100 | Installation for CCTV Panels for Security Network - (RD-C-1 /1)-Z3-C011-CCTV | 2027-12-01 → 2028-06-25 (+207d) | 2027-12-05 → 2028-07-02 (+210d) | 4d → 7d |  |  |
| 1839 | **RHD4-02-002-Z3-L122** | 2026-08-23 → 2026-08-04 (-19d) | 2028-02-20 → 2028-11-04 (+258d) |  |  |  |
| 2018 | **RHD4-02-002-Z3-L122-Road Works - RD** | 2026-09-09 → 2027-03-01 (+173d) | 2028-02-20 → 2028-11-04 (+258d) |  |  |  |
| 2019 | **RHD4-02-002-L122-(RD)-Subgrade** | 2026-09-09 → 2027-03-01 (+173d) | 2026-09-14 → 2027-03-06 (+173d) |  |  |  |
| RHD4CZ3L122RD1100 | Supply, lay and compaction subgrade compacted thickness 300 mm for Roads - (RD-L-12/2)-Z3-L122-RD | 2026-09-09 → 2027-03-01 (+173d) | 2026-09-14 → 2027-03-06 (+173d) |  |  |  |
| 2020 | **RHD4-02-002-L122-(RD)-Aggregate Base Course** | 2026-09-15 → 2027-03-07 (+173d) | 2026-09-20 → 2027-03-15 (+176d) |  |  |  |
| RHD4CZ3L122RD2100 | Supply, lay and compaction Aggregate base course compacted thickness 300 mmfor Roads - (RD-L-12/2)-Z3-L122-RD | 2026-09-15 → 2027-03-07 (+173d) | 2026-09-20 → 2027-03-15 (+176d) |  |  |  |
| 2021 | **RHD4-02-002-L122-(RD)-Bituminous base course Two Layers, including (MC1)&(RC2)** | 2026-09-21 → 2027-03-16 (+176d) | 2027-12-18 → 2028-08-30 (+256d) |  |  |  |
| RHD4CZ3L122RD3100 | Supply, lay and Asphaltic base course including Prime Coat (MC1) for 1st Layer - (RD-L-12/2)-Z3-L122-RD | 2026-09-21 → 2027-03-16 (+176d) | 2026-09-26 → 2027-03-21 (+176d) | 4d → 5d |  |  |
| RHD4CZ3L122RD3200 | Supply, lay and Asphaltic base course including Tack Coat (RC2) for 2nd Layer - (RD-L-12/2)-Z3-L122-RD | 2027-12-13 → 2028-08-26 (+257d) | 2027-12-18 → 2028-08-30 (+256d) |  |  |  |
| 2023 | **RHD4-02-002-L122-(RD)-Precast Concrete Curb** | 2027-12-19 → 2028-08-31 (+256d) | 2027-12-27 → 2028-09-09 (+257d) |  |  |  |
| RHD4CZ3L122RD5100 | Supply and installation Precast Concrete Kerb for Roads - (RD-L-12/2)-Z3-L122-RD | 2027-12-19 → 2028-08-31 (+256d) | 2027-12-27 → 2028-09-09 (+257d) |  |  |  |
| 2026 | **RHD4-02-002-L122-(RD)-Traffic Signage** | 2027-12-28 → 2028-09-10 (+257d) | 2028-01-04 → 2028-09-17 (+257d) |  |  |  |
| RHD4CZ3L122RD8100 | Installation of Traffic Signage for Road Network - (RD-L-12/2)-Z3-L122-RD | 2027-12-28 → 2028-09-10 (+257d) | 2028-01-04 → 2028-09-17 (+257d) |  |  |  |
| 2024 | **RHD4-02-002-L122-(RD)-Precast Interlocking Block Pavers** | 2028-01-05 → 2028-09-18 (+257d) | 2028-01-27 → 2028-10-11 (+258d) |  |  |  |
| RHD4CZ3L122RD6100 | Interlocking block pavers for sidewalk-footpath for Side walks and Parking areas - (RD-L-12/2)-Z3-L122-RD | 2028-01-05 → 2028-09-18 (+257d) | 2028-01-27 → 2028-10-11 (+258d) |  |  | resources Skilled labor [428.64 h]; Unskilled Labor [642.97 h]; Equipment Opreator [696.55 h]; Boom Truck [214.32 h]; Bobcat [214.32 h]; Concrete Mixer Truck [214.32 h]; Water Truck [53.58 h]; Interlock 80 mm thick Pavers for parking including sand fill [4920 m2] → Skilled labor [428.64 h]; Unskilled Labor [642.97 h]; Equipment Opreator [696.55 h]; Boom Truck [214.32 h]; Bobcat [214.32 h]; Concrete Mixer Truck [214.32 h]; Water Truck [53.6 h]; Interlock 80 mm thick Pavers for parking including sand fill [4920 m2] |
| 2022 | **RHD4-02-002-L122-(RD)-Bituminous concrete wearing course including tack coat (RC2)** | 2028-01-29 → 2028-10-12 (+257d) | 2028-02-06 → 2028-10-21 (+258d) |  |  |  |
| RHD4CZ3L122RD4100 | Supply, lay and compaction Asphaltic wearing course including tack Coat (RC2)for Road Network - (RD-L-12/2)-Z3-L122-RD | 2028-01-29 → 2028-10-12 (+257d) | 2028-02-06 → 2028-10-21 (+258d) |  |  |  |
| 2025 | **RHD4-02-002-L122-(RD)-Pavement Marking** | 2028-02-07 → 2028-10-22 (+258d) | 2028-02-20 → 2028-11-04 (+258d) |  |  |  |
| RHD4CZ3L122RD7100 | Pavement Markings for Road Network - (RD-L-12/2)-Z3-L122-RD | 2028-02-07 → 2028-10-22 (+258d) | 2028-02-20 → 2028-11-04 (+258d) |  |  |  |
| 1843 | **RHD4-02-002-Z3-L122-Storm Network - ST** | 2026-08-23 → 2026-09-19 (+27d) | 2026-12-08 → 2027-06-15 (+189d) |  |  |  |
| 3743 | **RHD4-02-002-L122-(ST)-GRP Pipes - 1100 mm diameter** | 2026-09-10 → 2027-01-19 (+131d) | 2026-09-21 → 2027-01-30 (+131d) |  |  |  |
| RHD4CZ3L122ST1107 | Excavation works for GRP Pipe Line 1100 mm - (RD-L-12 /2)-Z3-L122-ST | 2026-09-10 → 2027-01-19 (+131d) | 2026-09-12 → 2027-01-20 (+130d) |  |  |  |
| RHD4CZ3L122ST1207 | Bedding works for GRP Pipe Line 1100 mm - (RD-L-12 /2)-Z3-L122-ST | 2026-09-13 → 2027-01-21 (+130d) | 2026-09-14 → 2027-01-23 (+131d) |  |  |  |
| RHD4CZ3L122ST1307 | Installing for GRP Pipe Line 1100 mm - (RD-L-12 /2)-Z3-L122-ST | 2026-09-15 → 2027-01-24 (+131d) | 2026-09-16 → 2027-01-25 (+131d) |  |  | resources Unskilled Labor [7.19 h]; Plumber [3.59 h]; GRP (1100mm Diameter) - ST - Depth: 1.51m - 2.5m [14.64 m]; GRP (1100mm Diameter) - ST - Depth: 2.51m - 3.5m [41.49 m] → Unskilled Labor [7.2 h]; Plumber [3.59 h]; GRP (1100mm Diameter) - ST - Depth: 1.51m - 2.5m [14.64 m]; GRP (1100mm Diameter) - ST - Depth: 2.51m - 3.5m [41.49 m] |
| RHD4CZ3L122ST1407 | Primary Test for GRP Pipe Line 1100 mm - (RD-L-12 /2)-Z3-L122-ST | 2026-09-17 → 2027-01-26 (+131d) | 2026-09-19 → 2027-01-27 (+130d) |  |  |  |
| RHD4CZ3L122ST1507 | Backfilling and warning tape works for GRP Pipe Line 1100 mm - (RD-L-12 /2)-Z3-L122-ST | 2026-09-20 → 2027-01-28 (+130d) | 2026-09-21 → 2027-01-30 (+131d) |  |  |  |
| 2039 | **RHD4-02-002-L122-(ST)-GRP Pipes - 1000 mm diameter** | 2026-08-25 → 2027-01-03 (+131d) | 2026-09-05 → 2027-01-13 (+130d) |  |  |  |
| RHD4CZ3L122ST1106 | Excavation works for GRP Pipe Line 1000 mm - (RD-L-12 /2)-Z3-L122-ST | 2026-08-25 → 2027-01-03 (+131d) | 2026-08-26 → 2027-01-04 (+131d) |  |  |  |
| RHD4CZ3L122ST1206 | Bedding works for GRP Pipe Line 1000 mm - (RD-L-12 /2)-Z3-L122-ST | 2026-08-27 → 2027-01-05 (+131d) | 2026-08-29 → 2027-01-06 (+130d) |  |  |  |
| RHD4CZ3L122ST1306 | Installing for GRP Pipe Line 1000 mm - (RD-L-12 /2)-Z3-L122-ST | 2026-08-30 → 2027-01-07 (+130d) | 2026-08-31 → 2027-01-09 (+131d) |  |  |  |
| RHD4CZ3L122ST1406 | Primary Test for GRP Pipe Line 1000 mm - (RD-L-12 /2)-Z3-L122-ST | 2026-09-01 → 2027-01-10 (+131d) | 2026-09-02 → 2027-01-11 (+131d) |  |  |  |
| RHD4CZ3L122ST1506 | Backfilling and warning tape works for GRP Pipe Line 1000 mm - (RD-L-12 /2)-Z3-L122-ST | 2026-09-03 → 2027-01-12 (+131d) | 2026-09-05 → 2027-01-13 (+130d) |  |  |  |
| 5252 | **RHD4-02-002-L122-(ST)-GRP Pipes - 700 mm diameter** | 2026-08-27 → 2027-01-05 (+131d) | 2026-09-07 → 2027-01-16 (+131d) |  |  |  |
| RHD4CZ3L122ST1103 | Excavation works for GRP Pipe Line 700 mm - (RD-L-12 /2)-Z3-L122-ST | 2026-08-27 → 2027-01-05 (+131d) | 2026-08-29 → 2027-01-06 (+130d) |  |  |  |
| RHD4CZ3L122ST1203 | Bedding works for GRP Pipe Line 700 mm - (RD-L-12 /2)-Z3-L122-ST | 2026-08-30 → 2027-01-07 (+130d) | 2026-08-31 → 2027-01-09 (+131d) |  |  |  |
| RHD4CZ3L122ST1303 | Installing for GRP Pipe Line 700 mm - (RD-L-12 /2)-Z3-L122-ST | 2026-09-01 → 2027-01-10 (+131d) | 2026-09-02 → 2027-01-11 (+131d) |  |  |  |
| RHD4CZ3L122ST1403 | Primary Test for GRP Pipe Line 700 mm - (RD-L-12 /2)-Z3-L122-ST | 2026-09-03 → 2027-01-12 (+131d) | 2026-09-05 → 2027-01-13 (+130d) |  |  |  |
| RHD4CZ3L122ST1503 | Backfilling and warning tape works for GRP Pipe Line 700 mm - (RD-L-12 /2)-Z3-L122-ST | 2026-09-06 → 2027-01-14 (+130d) | 2026-09-07 → 2027-01-16 (+131d) |  |  |  |
| 5250 | **RHD4-02-002-L122-(ST)-GRP Pipes - 500 mm diameter** | 2026-08-30 → 2027-01-07 (+130d) | 2026-09-09 → 2027-01-18 (+131d) |  |  |  |
| RHD4CZ3L122ST1101 | Excavation works for GRP Pipe Line 500 mm - (RD-L-12 /2)-Z3-L122-ST | 2026-08-30 → 2027-01-07 (+130d) | 2026-08-31 → 2027-01-09 (+131d) |  |  |  |
| RHD4CZ3L122ST1201 | Bedding works for GRP Pipe Line 500 mm - (RD-L-12 /2)-Z3-L122-ST | 2026-09-01 → 2027-01-10 (+131d) | 2026-09-02 → 2027-01-11 (+131d) |  |  | resources Skilled labor [9.58 h]; Unskilled Labor [19.06 h]; Equipment Opreator [19.06 h]; Excavator-Poclain [9.58 h]; Dump Truck [9.58 h]; GRP (500mm Diameter) - ST - Depth less than 1.5 m [9.9 m]; GRP (500mm Diameter) - ST - Depth: 1.51m - 2.5m → Skilled labor [9.6 h]; Unskilled Labor [19.06 h]; Equipment Opreator [19.06 h]; Excavator-Poclain [9.6 h]; Dump Truck [9.6 h]; GRP (500mm Diameter) - ST - Depth less than 1.5 m [9.9 m]; GRP (500mm Diameter) - ST - Depth: 1.51m - 2.5m |
| RHD4CZ3L122ST1301 | Installing for GRP Pipe Line 500 mm - (RD-L-12 /2)-Z3-L122-ST | 2026-09-03 → 2027-01-12 (+131d) | 2026-09-05 → 2027-01-13 (+130d) |  |  | resources Unskilled Labor [24.07 h]; Plumber [11.98 h]; GRP (500mm Diameter) - ST - Depth less than 1.5 m [89.08 m]; GRP (500mm Diameter) - ST - Depth: 1.51m - 2.5m → Unskilled Labor [24.07 h]; Plumber [12 h]; GRP (500mm Diameter) - ST - Depth less than 1.5 m [89.08 m]; GRP (500mm Diameter) - ST - Depth: 1.51m - 2.5m |
| RHD4CZ3L122ST1401 | Primary Test for GRP Pipe Line 500 mm - (RD-L-12 /2)-Z3-L122-ST | 2026-09-06 → 2027-01-14 (+130d) | 2026-09-07 → 2027-01-16 (+131d) |  |  |  |
| RHD4CZ3L122ST1501 | Backfilling and warning tape works for GRP Pipe Line 500 mm - (RD-L-12 /2)-Z3-L122-ST | 2026-09-08 → 2027-01-17 (+131d) | 2026-09-09 → 2027-01-18 (+131d) |  |  | resources Skilled labor [10.78 h]; Unskilled Labor [21.56 h]; Equipment Opreator [21.56 h]; Excavator-Poclain [10.78 h]; Dump Truck [10.78 h]; GRP (500mm Diameter) - ST - Depth less than 1.5 m [39.59 m]; GRP (500mm Diameter) - ST - Depth: 1.51m - 2.5m → Skilled labor [10.78 h]; Unskilled Labor [21.6 h]; Equipment Opreator [21.6 h]; Excavator-Poclain [10.78 h]; Dump Truck [10.78 h]; GRP (500mm Diameter) - ST - Depth less than 1.5 m [39.59 m]; GRP (500mm Diameter) - ST - Depth: 1.51m - 2.5m |
| 1862 | **RHD4-02-002-L122-(ST)-MH Works - 2000 mm diameter** | 2026-08-23 → 2026-12-31 (+130d) | 2026-09-26 → 2027-03-04 (+159d) |  |  |  |
| RHD4CZ3L122ST3102 | Excavation and PC Blinding works for MH 2000 mm - (RD-L-12/2)-Z3-L122-ST | 2026-08-23 → 2026-12-31 (+130d) | 2026-08-24 → 2027-01-02 (+131d) |  |  |  |
| RHD4CZ3L122ST3202 | Installation of Base for MH 2000 mm - (RD-L-12/2)-Z3-L122-ST | 2026-08-25 → 2027-02-18 (+177d) | 2026-08-27 → 2027-02-21 (+178d) |  |  |  |
| RHD4CZ3L122ST3302 | MH Ring and C.Slab works and Backfilling works for MH 2000 mm - (RD-L-12/2)-Z3-L122-ST | 2026-08-29 → 2027-02-23 (+178d) | 2026-09-02 → 2027-02-28 (+179d) |  |  |  |
| RHD4CZ3L122ST3402 | Steel Cover for MH 2000 mm - (RD-L-12/2)-Z3-L122-ST | 2026-09-21 → 2027-03-01 (+161d) | 2026-09-22 → 2027-03-02 (+161d) |  |  |  |
| RHD4CZ3L122ST3502 | Finishing, Benching, Testing works for MH 2000 mm - (RD-L-12/2)-Z3-L122-ST | 2026-09-24 → 2027-03-03 (+160d) | 2026-09-26 → 2027-03-04 (+159d) |  |  |  |
| 1861 | **RHD4-02-002-L122-(ST)-MH Works - 1500 mm diameter** | 2026-10-22 → 2027-04-25 (+185d) | 2026-12-05 → 2027-06-12 (+189d) |  |  |  |

| ID | Task | Start | Finish | Duration | Complete | Other |
| --- | --- | --- | --- | --- | --- | --- |
| RHD4CZ3L122ST3101 | Excavation and PC Blinding works for MH 1500 mm - (RD-L-12/2)-Z3-L122-ST | 2026-10-22 → 2027-04-25 (+185d) | 2026-10-27 → 2027-04-29 (+184d) |  |  | resources Skilled labor [49.01 h]; Unskilled Labor [49.01 h]; Equipment Opreator [78.41 h]; Excavator-Poclain [49.01 h]; Water Truck [4.9 h]; Dump Truck [24.5 h]; MH (1500mm Diameter) - ST - depth 1.50 - 2.5m [2 nr]; MH (1500mm Diameter) - ST - depth 2.51 - 3.5m [0.25 nr] → Skilled labor [49.01 h]; Unskilled Labor [49.01 h]; Equipment Opreator [78.4 h]; Excavator-Poclain [49.01 h]; Water Truck [4.9 h]; Dump Truck [24.5 h]; MH (1500mm Diameter) - ST - depth 1.50 - 2.5m [2 nr]; MH (1500mm Diameter) - ST - depth 2.51 - 3.5m [0.25 nr] |
| RHD4CZ3L122ST3201 | Installation of Base for MH 1500 mm - (RD-L-12/2)-Z3-L122-ST | 2026-10-28 → 2027-05-01 (+185d) | 2026-11-02 → 2027-05-05 (+184d) |  |  |  |
| RHD4CZ3L122ST3301 | MH Ring and C.Slab works and Backfilling works for MH 1500 mm - (RD-L-12/2)-Z3-L122-ST | 2026-11-03 → 2027-05-06 (+184d) | 2026-11-08 → 2027-05-11 (+184d) |  |  |  |
| RHD4CZ3L122ST3401 | Steel Cover for MH 1500 mm - (RD-L-12/2)-Z3-L122-ST | 2026-11-09 → 2027-05-12 (+184d) | 2026-11-11 → 2027-05-19 (+189d) |  |  |  |
| RHD4CZ3L122ST3501 | Finishing, Benching, Testing works for MH 1500 mm - (RD-L-12/2)-Z3-L122-ST | 2026-11-30 → 2027-06-07 (+189d) | 2026-12-05 → 2027-06-12 (+189d) |  |  |  |
| 1860 | **RHD4-02-002-L122-(ST)-MH Works - 1200 mm diameter** | 2026-10-28 → 2027-05-01 (+185d) | 2026-12-08 → 2027-06-15 (+189d) |  |  |  |
| RHD4CZ3L122ST3100 | Excavation and PC Blinding works for MH 1200 mm - (RD-L-12/2)-Z3-L122-ST | 2026-10-28 → 2027-05-01 (+185d) | 2026-11-02 → 2027-05-05 (+184d) |  |  |  |
| RHD4CZ3L122ST3200 | Installation of Base for MH 1200 mm - (RD-L-12/2)-Z3-L122-ST | 2026-11-03 → 2027-05-06 (+184d) | 2026-11-08 → 2027-05-11 (+184d) |  |  | resources Skilled labor [27.23 h]; Unskilled Labor [27.23 h]; Equipment Opreator [10.89 h]; Boom Truck [5.45 h]; Concrete Mixer Truck [5.45 h]; MH (1200mm Diameter) - ST - depth less than 1.5 [0.5 nr]; MH (1200mm Diameter) - ST - depth 1.50 - 2.5m [1.5 nr] → Skilled labor [27.2 h]; Unskilled Labor [27.2 h]; Equipment Opreator [10.89 h]; Boom Truck [5.45 h]; Concrete Mixer Truck [5.45 h]; MH (1200mm Diameter) - ST - depth less than 1.5 [0.5 nr]; MH (1200mm Diameter) - ST - depth 1.50 - 2.5m [1.5 nr] |
| RHD4CZ3L122ST3300 | MH Ring and C.Slab works and Backfilling works for MH 1200 mm - (RD-L-12/2)-Z3-L122-ST | 2026-11-09 → 2027-05-12 (+184d) | 2026-11-11 → 2027-05-19 (+189d) |  |  | resources Skilled labor [27.23 h]; Unskilled Labor [27.23 h]; Equipment Opreator [19.06 h]; Boom Truck [10.89 h]; Concrete Mixer Truck [8.17 h]; MH (1200mm Diameter) - ST - depth less than 1.5 [0.7 nr]; MH (1200mm Diameter) - ST - depth 1.50 - 2.5m [2.1 nr] → Skilled labor [27.2 h]; Unskilled Labor [27.2 h]; Equipment Opreator [19.06 h]; Boom Truck [10.89 h]; Concrete Mixer Truck [8.17 h]; MH (1200mm Diameter) - ST - depth less than 1.5 [0.7 nr]; MH (1200mm Diameter) - ST - depth 1.50 - 2.5m [2.1 nr] |
| RHD4CZ3L122ST3400 | Steel Cover for MH 1200 mm - (RD-L-12/2)-Z3-L122-ST | 2026-11-30 → 2027-06-07 (+189d) | 2026-12-02 → 2027-06-09 (+189d) |  |  |  |
| RHD4CZ3L122ST3500 | Finishing, Benching, Testing works for MH 1200 mm - (RD-L-12/2)-Z3-L122-ST | 2026-12-06 → 2027-06-13 (+189d) | 2026-12-08 → 2027-06-15 (+189d) |  |  |  |
| 1848 | **RHD4-02-002-L122-(ST)-GRP Pipes - 800 mm diameter** | 2026-09-06 → 2027-01-14 (+130d) | 2026-09-16 → 2027-01-25 (+131d) |  |  |  |
| RHD4CZ3L122ST1104 | Excavation works for GRP Pipe Line 800 mm - (RD-L-12/2)-Z3-L122-ST | 2026-09-06 → 2027-01-14 (+130d) | 2026-09-07 → 2027-01-16 (+131d) |  |  |  |
| RHD4CZ3L122ST1204 | Bedding works for GRP Pipe Line 800 mm - (RD-L-12/2)-Z3-L122-ST | 2026-09-08 → 2027-01-17 (+131d) | 2026-09-09 → 2027-01-18 (+131d) |  |  |  |
| RHD4CZ3L122ST1304 | Installing for GRP Pipe Line 800 mm - (RD-L-12/2)-Z3-L122-ST | 2026-09-10 → 2027-01-19 (+131d) | 2026-09-12 → 2027-01-20 (+130d) |  |  |  |
| RHD4CZ3L122ST1404 | Primary Test for GRP Pipe Line 800 mm - (RD-L-12/2)-Z3-L122-ST | 2026-09-13 → 2027-01-21 (+130d) | 2026-09-14 → 2027-01-23 (+131d) |  |  |  |
| RHD4CZ3L122ST1504 | Backfilling and warning tape works for GRP Pipe Line 800 mm - (RD-L-12/2)-Z3-L122-ST | 2026-09-15 → 2027-01-24 (+131d) | 2026-09-16 → 2027-01-25 (+131d) |  |  |  |
| 1844 | **RHD4-02-002-L122-(ST)-GRP Pipes - 400 mm diameter** | 2026-09-08 → 2026-09-19 (+11d) | 2026-09-20 → 2027-01-28 (+130d) |  |  |  |
| RHD4CZ3L122ST1100 | Excavation works for GRP Pipe Line 400 mm - (RD-L-12/2)-Z3-L122-ST | 2026-09-08 → 2026-09-19 A (+11d) | 2026-09-09 → 2027-01-18 (+131d) |  | 0% → 71% |  |
| RHD4CZ3L122ST1200 | Bedding works for GRP Pipe Line 400 mm - (RD-L-12/2)-Z3-L122-ST | 2026-09-10 → 2027-01-19 (+131d) | 2026-09-12 → 2027-01-20 (+130d) |  |  | resources Skilled labor [14.05 h]; Unskilled Labor [27.99 h]; Equipment Opreator [27.99 h]; Excavator-Poclain [14.05 h]; Dump Truck [14.05 h]; GRP (400mm Diameter) - ST - Depth less than 1.5 m [17.59 m]; GRP (400mm Diameter) - ST - Depth: 1.51m - 2.5 m → Skilled labor [14.05 h]; Unskilled Labor [28 h]; Equipment Opreator [28 h]; Excavator-Poclain [14.05 h]; Dump Truck [14.05 h]; GRP (400mm Diameter) - ST - Depth less than 1.5 m [17.59 m]; GRP (400mm Diameter) - ST - Depth: 1.51m - 2.5 m |
| RHD4CZ3L122ST1300 | Installing for GRP Pipe Line 400 mm - (RD-L-12/2)-Z3-L122-ST | 2026-09-13 → 2027-01-21 (+130d) | 2026-09-15 → 2027-01-24 (+131d) |  |  |  |
| RHD4CZ3L122ST1400 | Primary Test for GRP Pipe Line 400 mm - (RD-L-12/2)-Z3-L122-ST | 2026-09-16 → 2027-01-25 (+131d) | 2026-09-17 → 2027-01-26 (+131d) |  |  |  |
| RHD4CZ3L122ST1500 | Backfilling and warning tape works for GRP Pipe Line 400 mm - (RD-L-12/2)-Z3-L122-ST | 2026-09-19 → 2027-01-27 (+130d) | 2026-09-20 → 2027-01-28 (+130d) |  |  | resources Skilled labor [19.17 h]; Unskilled Labor [38.33 h]; Equipment Opreator [38.33 h]; Excavator-Poclain [19.17 h]; Dump Truck [19.17 h]; GRP (400mm Diameter) - ST - Depth less than 1.5 m [70.36 m]; GRP (400mm Diameter) - ST - Depth: 1.51m - 2.5 m → Skilled labor [19.2 h]; Unskilled Labor [38.33 h]; Equipment Opreator [38.33 h]; Excavator-Poclain [19.2 h]; Dump Truck [19.2 h]; GRP (400mm Diameter) - ST - Depth less than 1.5 m [70.36 m]; GRP (400mm Diameter) - ST - Depth: 1.51m - 2.5 m |
| 1858 | **RHD4-02-002-L122-(ST)-UPVC Pipes - 300 mm diameter** | 2026-11-12 → 2026-09-19 (-54d) | 2026-11-29 → 2027-06-06 (+189d) |  |  |  |
| RHD4CZ3L122ST2100 | Excavation works for UPVC Pipe Line 300 mm - (RD-L-12/2)-Z3-L122-ST | 2026-11-12 → 2026-09-19 A (-54d) | 2026-11-15 → 2027-05-23 (+189d) |  | 0% → 28% | resources Skilled labor [32.02 h]; Unskilled Labor [32.02 h]; Equipment Opreator [38.44 h]; Excavator-Poclain [32.02 h]; Dump Truck [6.43 h]; UPVC (300mm Diameter) - ST - Depth less than 1.5 [73.29 m]; UPVC (300mm Diameter) - ST - Depth: 1.51m - 2.5m → Skilled labor [32 h]; Unskilled Labor [32 h]; Equipment Opreator [38.44 h]; Excavator-Poclain [32 h]; Dump Truck [6.4 h]; UPVC (300mm Diameter) - ST - Depth less than 1.5 [73.29 m]; UPVC (300mm Diameter) - ST - Depth: 1.51m - 2.5m |
| RHD4CZ3L122ST2200 | Bedding works for UPVC Pipe Line 300 mm - (RD-L-12/2)-Z3-L122-ST | 2026-11-16 → 2027-05-24 (+189d) | 2026-11-18 → 2027-05-26 (+189d) |  |  | resources Skilled labor [26.79 h]; Unskilled Labor [53.58 h]; Equipment Opreator [53.58 h]; Excavator-Poclain [26.79 h]; Dump Truck [26.79 h]; UPVC (300mm Diameter) - ST - Depth less than 1.5 [36.64 m]; UPVC (300mm Diameter) - ST - Depth: 1.51m - 2.5m → Skilled labor [26.79 h]; Unskilled Labor [53.6 h]; Equipment Opreator [53.6 h]; Excavator-Poclain [26.79 h]; Dump Truck [26.79 h]; UPVC (300mm Diameter) - ST - Depth less than 1.5 [36.64 m]; UPVC (300mm Diameter) - ST - Depth: 1.51m - 2.5m |
| RHD4CZ3L122ST2300 | Installing for UPVC Pipe Line 300 mm - (RD-L-12/2)-Z3-L122-ST | 2026-11-19 → 2027-05-27 (+189d) | 2026-11-22 → 2027-05-30 (+189d) |  |  | resources Unskilled Labor [64.04 h]; Plumber [32.02 h]; UPVC (300mm Diameter) - ST - Depth less than 1.5 [329.8 m]; UPVC (300mm Diameter) - ST - Depth: 1.51m - 2.5m → Unskilled Labor [64 h]; Plumber [32 h]; UPVC (300mm Diameter) - ST - Depth less than 1.5 [329.8 m]; UPVC (300mm Diameter) - ST - Depth: 1.51m - 2.5m |
| RHD4CZ3L122ST2400 | Primary Test for UPVC Pipe Line 300 mm - (RD-L-12/2)-Z3-L122-ST | 2026-11-23 → 2027-05-31 (+189d) | 2026-11-24 → 2027-06-01 (+189d) |  |  |  |
| RHD4CZ3L122ST2500 | Backfilling and warning tape works for UPVC Pipe Line 300 mm - (RD-L-12/2)-Z3-L122-ST | 2026-11-25 → 2027-06-02 (+189d) | 2026-11-29 → 2027-06-06 (+189d) |  |  |  |
| 1866 | **RHD4-02-002-L122-(ST)-Concrete Encasement** | 2026-11-19 → 2027-05-27 (+189d) | 2026-11-24 → 2027-06-01 (+189d) |  |  |  |
| RHD4CZ3L122ST6100 | Pipe Encasement for Storm Pipelines - (RD-L-12/2)-Z3-L122-ST | 2026-11-19 → 2027-05-27 (+189d) | 2026-11-24 → 2027-06-01 (+189d) |  |  |  |
| 1867 | **RHD4-02-002-Z3-L122-Catch Basin - ST** | 2026-11-03 → 2026-09-19 (-45d) | 2026-12-30 → 2027-07-07 (+189d) |  |  |  |
| 1868 | **RHD4-02-002-L122-(ST)-Single Catch Basin Works** | 2026-11-03 → 2026-09-19 (-45d) | 2026-12-19 → 2027-06-26 (+189d) |  |  |  |
| RHD4CZ3L122ST7100 | Excavation works for Single Catch Basin - (RD-L-12/2)-Z3-L122-ST | 2026-11-03 → 2026-09-19 A (-45d) | 2026-11-05 → 2027-05-08 (+184d) |  | 0% → 80% |  |
| RHD4CZ3L122ST7200 | PC Blinding, Installation and Pipe connection for Single Catch Basin - (RD-L-12/2)-Z3-L122-ST | 2026-11-07 → 2027-05-09 (+183d) | 2026-11-09 → 2027-05-13 (+185d) | 3d → 5d |  |  |
| RHD4CZ3L122ST7300 | Rings & C.Slab & Final Backfill for Single Catch Basin - (RD-L-12/2)-Z3-L122-ST | 2026-11-10 → 2027-05-19 (+190d) | 2026-11-12 → 2027-05-25 (+194d) | 3d → 6d |  |  |
| RHD4CZ3L122ST7400 | Steel Cover for Single Catch Basin - (RD-L-12/2)-Z3-L122-ST | 2026-11-14 → 2027-05-26 (+193d) | 2026-11-18 → 2027-05-31 (+194d) |  |  |  |
| RHD4CZ3L122ST7500 | Finishing and Insulation works for Single Catch Basin - (RD-L-12/2)-Z3-L122-ST | 2026-12-09 → 2027-06-16 (+189d) | 2026-12-19 → 2027-06-26 (+189d) |  |  |  |
| 1869 | **RHD4-02-002-L122-(ST)-Double Catch Basin Works** | 2026-12-20 → 2027-06-27 (+189d) | 2026-12-30 → 2027-07-07 (+189d) |  |  |  |
| RHD4CZ3L122ST8100 | Excavation works for Double Catch Basin - (RD-L-12/2)-Z3-L122-ST | 2026-12-20 → 2027-06-27 (+189d) | 2026-12-21 → 2027-06-28 (+189d) |  |  |  |
| RHD4CZ3L122ST8200 | PC Blinding, Installation and Pipe connection for Double Catch Basin - (RD-L-12/2)-Z3-L122-ST | 2026-12-22 → 2027-06-29 (+189d) | 2026-12-23 → 2027-06-30 (+189d) |  |  |  |
| RHD4CZ3L122ST8300 | Rings & C.Slab & Final Backfillfor Double Catch Basin - (RD-L-12/2)-Z3-L122-ST | 2026-12-24 → 2027-07-01 (+189d) | 2026-12-26 → 2027-07-03 (+189d) |  |  |  |
| RHD4CZ3L122ST8400 | Steel Cover for Double Catch Basin - (RD-L-12/2)-Z3-L122-ST | 2026-12-27 → 2027-07-04 (+189d) | 2026-12-28 → 2027-07-05 (+189d) |  |  |  |
| RHD4CZ3L122ST8500 | Finishing and Insulation works for Double Catch Basin - (RD-L-12/2)-Z3-L122-ST | 2026-12-29 → 2027-07-06 (+189d) | 2026-12-30 → 2027-07-07 (+189d) |  |  |  |
| 4299 | **RHD4-02-002-Z3-L122-Concrete Box Culvert - ST** | 2026-12-31 → 2026-08-04 (-149d) | 2027-02-02 → 2027-07-25 (+173d) |  |  |  |
| 4300 | **RHD4-02-002-L122-(ST)-Concrete Box Culvert** | 2026-12-31 → 2026-08-04 (-149d) | 2027-02-02 → 2027-07-25 (+173d) |  |  |  |
| RHD4CZ3L122ST4100 | Excavation works for Box Culvert - (RD-L-12/2)-Z3-L122-ST | 2026-12-31 → 2026-08-04 A (-149d) | 2027-01-13 → 2026-08-08 A (-158d) |  | 0% → 100% |  |
| RHD4CZ3L122ST4200 | PC works for Box Culvert - (RD-L-12/2)-Z3-L122-ST | 2026-12-31 → 2026-08-06 A (-147d) | 2027-01-06 → 2026-08-08 A (-151d) |  | 0% → 100% |  |
| RHD4CZ3L122ST4400 | Raft works for Box Culvert - (RD-L-12/2)-Z3-L122-ST | 2026-12-31 → 2026-08-09 A (-144d) | 2027-01-05 → 2026-08-12 A (-146d) |  | 0% → 100% | resources Carpenter [37.35 h]; Skilled labor [45.3 h]; Steel Fixer [7.95 h]; Equipment Opreator [76.34 h]; Boom Truck [1.63 h]; Concrete Mixer Truck [37.35 h]; Concrete Pump [37.35 h]; Supply and cast in place reinforced concrete for Box culverts - ST [274.52 m3]; Supply, placing, and fixing of high tensile reinforcement steel for Box culverts - ST [58.66 Ton] → Carpenter [37.35 h]; Skilled labor [45.3 h]; Steel Fixer [7.95 h]; Equipment Opreator [76.34 h]; Boom Truck [1.6 h]; Concrete Mixer Truck [37.35 h]; Concrete Pump [37.35 h]; Supply and cast in place reinforced concrete for Box culverts - ST [274.52 m3]; Supply, placing, and fixing of high tensile reinforcement steel for Box culverts - ST [58.66 Ton] |
| RHD4CZ3L122ST4500 | Wall and slab works for Box Culvert - (RD-L-12/2)-Z3-L122-ST | 2027-01-06 → 2026-08-13 A (-146d) | 2027-01-11 → 2026-09-23 A (-110d) |  | 0% → 100% | resources Carpenter [37.35 h]; Skilled labor [45.3 h]; Steel Fixer [7.95 h]; Equipment Opreator [76.34 h]; Boom Truck [1.63 h]; Concrete Mixer Truck [37.35 h]; Concrete Pump [37.35 h]; Supply and cast in place reinforced concrete for Box culverts - ST [343.15 m3]; Supply, placing, and fixing of high tensile reinforcement steel for Box culverts - ST [87.99 Ton] → Carpenter [37.35 h]; Skilled labor [45.3 h]; Steel Fixer [7.95 h]; Equipment Opreator [76.34 h]; Boom Truck [1.6 h]; Concrete Mixer Truck [37.35 h]; Concrete Pump [37.35 h]; Supply and cast in place reinforced concrete for Box culverts - ST [343.15 m3]; Supply, placing, and fixing of high tensile reinforcement steel for Box culverts - ST [87.99 Ton] |
| RHD4CZ3L122ST4600 | Insulation and Testing for Box Culvert - (RD-L-12/2)-Z3-L122-ST | 2027-01-30 → 2026-09-24 A (-128d) | 2027-02-02 → 2026-09-28 A (-127d) |  | 0% → 100% |  |
| RHD4CZ3L122ST4700 | Backfilling works for Box Culvert - (RD-L-12/2)-Z3-L122-ST | 2027-01-19 → 2027-07-15 (+177d) | 2027-01-28 → 2027-07-25 (+178d) |  |  |  |
| 4301 | **RHD4-02-002-L122-(ST)-Concrete Chambers** | 2027-01-12 → 2026-09-30 (-104d) | 2027-01-20 → 2027-07-17 (+178d) |  |  |  |
| RHD4CZ3L122ST5100 | Excavation and Bedding for Concrete Chambers - for Box Culvert - (RD-L-12/2)-Z3-L122-ST | 2027-01-12 → 2026-09-30 A (-104d) | 2027-01-13 → 2027-07-10 (+178d) |  | 0% → 50% |  |
| RHD4CZ3L122ST5200 | PC works for Concrete Chambers - for Box Culvert - (RD-L-12/2)-Z3-L122-ST | 2027-01-14 → 2026-10-03 A (-103d) | 2027-01-16 → 2027-07-12 (+177d) |  | 0% → 50% |  |
| RHD4CZ3L122ST5300 | Installation for Concrete Chambers - for Box Culvert - (RD-L-12/2)-Z3-L122-ST | 2027-01-17 → 2026-10-05 A (-104d) | 2027-01-18 → 2027-07-14 (+177d) |  | 0% → 50% |  |
| RHD4CZ3L122ST5400 | Backfilling works for Concrete Chambers - for Box Culvert - (RD-L-12/2)-Z3-L122-ST | 2027-01-19 → 2027-07-15 (+177d) | 2027-01-20 → 2027-07-17 (+178d) |  |  |  |
| 1892 | **RHD4-02-002-Z3-L122-Sewage Network - SW** | 2026-12-31 → 2026-10-20 (-72d) | 2027-02-04 → 2027-07-27 (+173d) |  |  |  |
| 577 | **RHD4-02-002-L122-(SW)-MH Works - 1200 mm diameter** | 2026-12-31 → 2026-10-20 (-72d) | 2027-02-04 → 2027-07-27 (+173d) |  |  |  |
| RHD4CZ3L122SW3100 | Excavation and PC Blinding works for MH 1200 mm - (RD-L-12 /2)-Z3-L122-SW | 2026-12-31 → 2026-10-20 A (-72d) | 2027-01-02 → 2026-10-21 A (-73d) |  | 0% → 100% | resources Skilled labor [16.34 h]; Unskilled Labor [16.34 h]; Equipment Opreator [26.14 h]; Excavator-Poclain [16.34 h]; Water Truck [1.63 h]; Dump Truck [8.17 h]; MH (1200mm Diameter) - SW - depth 1.51 - 2.5m [0.5 nr]; MH (1200mm Diameter) - SW - depth 2.51 - 3.5m [0.25 nr] → Skilled labor [16.34 h]; Unskilled Labor [16.34 h]; Equipment Opreator [26.14 h]; Excavator-Poclain [16.34 h]; Water Truck [1.6 h]; Dump Truck [8.17 h]; MH (1200mm Diameter) - SW - depth 1.51 - 2.5m [0.5 nr]; MH (1200mm Diameter) - SW - depth 2.51 - 3.5m [0.25 nr] |
| RHD4CZ3L122SW3200 | Installation of Base for MH 1200 mm - (RD-L-12 /2)-Z3-L122-SW | 2027-01-03 → 2027-07-08 (+186d) | 2027-01-04 → 2027-07-10 (+187d) |  |  |  |
| RHD4CZ3L122SW3300 | MH Ring and C.Slab works and Backfilling works for MH 1200 mm - (RD-L-12 /2)-Z3-L122-SW | 2027-01-05 → 2027-07-11 (+187d) | 2027-01-06 → 2027-07-12 (+187d) |  |  |  |
| RHD4CZ3L122SW3400 | Steel Cover for MH 1200 mm - (RD-L-12 /2)-Z3-L122-SW | 2027-01-07 → 2027-07-13 (+187d) | 2027-01-09 → 2027-07-14 (+186d) |  |  |  |
| RHD4CZ3L122SW3500 | Finishing, Benching, Testing works for MH 1200 mm - (RD-L-12 /2)-Z3-L122-SW | 2027-02-03 → 2027-07-26 (+173d) | 2027-02-04 → 2027-07-27 (+173d) |  |  |  |
| 573 | **RHD4-02-002-L122-(SW)-UPVC Pipes - 200 mm diameter** | 2027-01-03 → 2026-10-27 (-68d) | 2027-01-28 → 2027-07-17 (+170d) |  |  |  |
| RHD4CZ3L122SW2100 | Excavation works for UPVC Pipe Line 200 mm - (RD-L-12 /2)-Z3-L122-SW | 2027-01-03 → 2026-10-27 A (-68d) | 2027-01-04 → 2026-10-28 A (-68d) |  | 0% → 100% |  |
| RHD4CZ3L122SW2200 | Bedding works for UPVC Pipe Line 200 mm - (RD-L-12 /2)-Z3-L122-SW | 2027-01-05 → 2027-07-08 (+184d) | 2027-01-06 → 2027-07-10 (+185d) |  |  | resources Skilled labor [12.85 h]; Unskilled Labor [25.59 h]; Equipment Opreator [25.59 h]; Excavator-Poclain [12.85 h]; Dump Truck [12.85 h]; UPVC (200mm Diameter) - SW - Depth: less than 1.5m; UPVC (200mm Diameter) - SW - Depth: 1.51m - 2.5m [8.41 m] → Skilled labor [12.85 h]; Unskilled Labor [25.6 h]; Equipment Opreator [25.6 h]; Excavator-Poclain [12.85 h]; Dump Truck [12.85 h]; UPVC (200mm Diameter) - SW - Depth: less than 1.5m; UPVC (200mm Diameter) - SW - Depth: 1.51m - 2.5m [8.41 m] |
| RHD4CZ3L122SW2300 | Installing for UPVC Pipe Line 200 mm - (RD-L-12 /2)-Z3-L122-SW | 2027-01-07 → 2027-07-11 (+185d) | 2027-01-09 → 2027-07-12 (+184d) |  |  | resources Unskilled Labor [25.59 h]; Plumber [12.85 h]; Equipment Opreator [12.85 h]; Boom Truck [12.85 h]; UPVC (200mm Diameter) - SW - Depth: less than 1.5m; UPVC (200mm Diameter) - SW - Depth: 1.51m - 2.5m [67.24 m] → Unskilled Labor [25.6 h]; Plumber [12.85 h]; Equipment Opreator [12.85 h]; Boom Truck [12.85 h]; UPVC (200mm Diameter) - SW - Depth: less than 1.5m; UPVC (200mm Diameter) - SW - Depth: 1.51m - 2.5m [67.24 m] |
| RHD4CZ3L122SW2400 | Primary Test for UPVC Pipe Line 200 mm - (RD-L-12 /2)-Z3-L122-SW | 2027-01-10 → 2027-07-13 (+184d) | 2027-01-11 → 2027-07-14 (+184d) |  |  |  |
| RHD4CZ3L122SW2500 | Backfilling and warning tape works for UPVC Pipe Line 200 mm - (RD-L-12 /2)-Z3-L122-SW | 2027-01-27 → 2027-07-15 (+169d) | 2027-01-28 → 2027-07-17 (+170d) |  |  | resources Skilled labor [12.85 h]; Unskilled Labor [25.59 h]; Equipment Opreator [25.59 h]; Excavator-Poclain [12.85 h]; Dump Truck [12.85 h]; UPVC (200mm Diameter) - SW - Depth: less than 1.5m; UPVC (200mm Diameter) - SW - Depth: 1.51m - 2.5m [33.62 m] → Skilled labor [12.85 h]; Unskilled Labor [25.6 h]; Equipment Opreator [25.6 h]; Excavator-Poclain [12.85 h]; Dump Truck [12.85 h]; UPVC (200mm Diameter) - SW - Depth: less than 1.5m; UPVC (200mm Diameter) - SW - Depth: 1.51m - 2.5m [33.62 m] |

| ID | Task | Start | Finish | Duration | Other |
| --- | --- | --- | --- | --- | --- |
| 1929 | **RHD4-02-002-Z3-L122-Potable Network - PT** | 2027-01-30 → 2027-07-18 (+169d) | 2027-03-28 → 2027-09-21 (+177d) |  |  |
| 1933 | **RHD4-02-002-L122-(PT)-HDPE Pipes - 400 mm diameter** | 2027-01-30 → 2027-07-18 (+169d) | 2027-03-03 → 2027-08-31 (+181d) |  |  |
| RHD4CZ3L122PT1103 | Excavation works for HDPE Pipline 400 mm - (RD-L-12/2)-Z3-L122-PT | 2027-01-30 → 2027-07-18 (+169d) | 2027-02-07 → 2027-07-26 (+169d) |  |  |
| RHD4CZ3L122PT1203 | Bedding works for HDPE Pipline 400 mm - (RD-L-12/2)-Z3-L122-PT | 2027-02-08 → 2027-07-27 (+169d) | 2027-02-13 → 2027-08-03 (+171d) | 5d → 7d |  |
| RHD4CZ3L122PT1303 | Installing for HDPE Pipline 400 mm - (RD-L-12/2)-Z3-L122-PT | 2027-02-14 → 2027-08-04 (+171d) | 2027-02-18 → 2027-08-16 (+179d) | 5d → 11d |  |
| RHD4CZ3L122PT1403 | Primary Test for HDPE Pipline 400 mm - (RD-L-12/2)-Z3-L122-PT | 2027-02-20 → 2027-08-17 (+178d) | 2027-02-25 → 2027-08-22 (+178d) |  |  |
| RHD4CZ3L122PT1503 | Backfilling and warning tape works for HDPE Pipline 400 mm - (RD-L-12/2)-Z3-L122-PT | 2027-02-27 → 2027-08-23 (+177d) | 2027-03-03 → 2027-08-31 (+181d) | 5d → 8d |  |
| 1747 | **RHD4-02-002-L122-(PT)-Butterfly Valve Chamber** | 2027-02-08 → 2027-07-27 (+169d) | 2027-02-16 → 2027-08-04 (+169d) |  |  |
| RHD4CZ3L122PT2100 | Excavation and Bedding for Butterfly Valve Chamber for Potable Water Network - (RD-L-12/2)-Z3-L122-PT | 2027-02-08 → 2027-07-27 (+169d) | 2027-02-09 → 2027-07-28 (+169d) |  | resources Skilled labor [16.34 h]; Unskilled Labor [16.34 h]; Equipment Opreator [3.27 h]; Excavator-Poclain [1.63 h]; Dump Truck [1.63 h]; Valve chambers - PT [0.75 nr] → Skilled labor [16.34 h]; Unskilled Labor [16.34 h]; Equipment Opreator [3.27 h]; Excavator-Poclain [1.6 h]; Dump Truck [1.6 h]; Valve chambers - PT [0.75 nr] |
| RHD4CZ3L122PT2200 | PC works for Butterfly Valve Chamber for Potable Water Network - (RD-L-12/2)-Z3-L122-PT | 2027-02-10 → 2027-07-29 (+169d) | 2027-02-11 → 2027-07-31 (+170d) |  | resources Skilled labor [16.34 h]; Unskilled Labor [32.67 h]; Equipment Opreator [1.63 h]; Concrete Pump [1.63 h]; Valve chambers - PT [0.3 nr] → Skilled labor [16.34 h]; Unskilled Labor [32.67 h]; Equipment Opreator [1.6 h]; Concrete Pump [1.6 h]; Valve chambers - PT [0.3 nr] |
| RHD4CZ3L122PT2300 | Installation for Butterfly Valve Chamber for Potable Water Network - (RD-L-12/2)-Z3-L122-PT | 2027-02-13 → 2027-08-01 (+169d) | 2027-02-14 → 2027-08-02 (+169d) |  |  |
| RHD4CZ3L122PT2400 | Backfilling works for Butterfly Valve Chamber for Potable Water Network - (RD-L-12/2)-Z3-L122-PT | 2027-02-15 → 2027-08-03 (+169d) | 2027-02-16 → 2027-08-04 (+169d) |  | resources Skilled labor [16.34 h]; Unskilled Labor [32.67 h]; Equipment Opreator [3.27 h]; Water Truck [1.63 h]; Dump Truck [1.63 h]; Valve chambers - PT [0.3 nr] → Skilled labor [16.34 h]; Unskilled Labor [32.67 h]; Equipment Opreator [3.27 h]; Water Truck [1.6 h]; Dump Truck [1.6 h]; Valve chambers - PT [0.3 nr] |
| 1748 | **RHD4-02-002-L122-(PT)-Butterfly Valves** | 2027-02-15 → 2027-08-03 (+169d) | 2027-02-18 → 2027-08-07 (+170d) |  |  |
| RHD4CZ3L122PT3101 | Installation for Butterfly Valves for Potable Water Network - (RD-L-12/2)-Z3-L122-PT | 2027-02-15 → 2027-08-03 (+169d) | 2027-02-16 → 2027-08-04 (+169d) |  |  |
| RHD4CZ3L122PT3201 | Stem and Service box for Butterfly Valves for Potable Water Network - (RD-L-12/2)-Z3-L122-PT | 2027-02-17 → 2027-08-05 (+169d) | 2027-02-18 → 2027-08-07 (+170d) |  |  |
| 1939 | **RHD4-02-002-L122-(PT)-Wash out Valves** | 2027-03-22 → 2027-09-15 (+177d) | 2027-03-28 → 2027-09-21 (+177d) |  |  |
| RHD4CZ3L122PT3102 | Installation for Wash out Valves for Potable Water Network - (RD-L-12/2)-Z3-L122-PT | 2027-03-22 → 2027-09-15 (+177d) | 2027-03-23 → 2027-09-16 (+177d) |  |  |
| RHD4CZ3L122PT3202 | Stem and Service box for Wash out Valves for Potable Water Network - (RD-L-12/2)-Z3-L122-PT | 2027-03-27 → 2027-09-20 (+177d) | 2027-03-28 → 2027-09-21 (+177d) |  |  |
| 1940 | **RHD4-02-002-L122-(PT)-Air Valve Chambers** | 2027-02-08 → 2027-07-27 (+169d) | 2027-02-16 → 2027-08-04 (+169d) |  |  |
| RHD4CZ3L122PT2102 | Excavation and Bedding for Air Valve Chambers for Potable Water Network - (RD-L-12/2)-Z3-L122-PT | 2027-02-08 → 2027-07-27 (+169d) | 2027-02-09 → 2027-07-28 (+169d) |  |  |
| RHD4CZ3L122PT2202 | PC works for Air Valve Chambers for Potable Water Network - (RD-L-12/2)-Z3-L122-PT | 2027-02-10 → 2027-07-29 (+169d) | 2027-02-11 → 2027-07-31 (+170d) |  |  |
| RHD4CZ3L122PT2302 | Installation for Air Valve Chambers for Potable Water Network - (RD-L-12/2)-Z3-L122-PT | 2027-02-13 → 2027-08-01 (+169d) | 2027-02-14 → 2027-08-02 (+169d) |  |  |
| RHD4CZ3L122PT2402 | Backfilling works for Air Valve Chambers for Potable Water Network - (RD-L-12/2)-Z3-L122-PT | 2027-02-15 → 2027-08-03 (+169d) | 2027-02-16 → 2027-08-04 (+169d) |  |  |
| 1941 | **RHD4-02-002-L122-(PT)-Air Valves** | 2027-02-15 → 2027-08-03 (+169d) | 2027-02-18 → 2027-08-07 (+170d) |  |  |
| RHD4CZ3L122PT3103 | Installation for Air Valves for Potable Water Network - (RD-L-12/2)-Z3-L122-PT | 2027-02-15 → 2027-08-03 (+169d) | 2027-02-16 → 2027-08-04 (+169d) |  |  |
| RHD4CZ3L122PT3203 | Stem and Service box for Air Valves for Potable Water Network - (RD-L-12/2)-Z3-L122-PT | 2027-02-17 → 2027-08-05 (+169d) | 2027-02-18 → 2027-08-07 (+170d) |  |  |
| 1942 | **RHD4-02-002-L122-(PT)-Fire Hydrant** | 2027-03-04 → 2027-09-01 (+181d) | 2027-03-18 → 2027-09-12 (+178d) |  |  |
| RHD4CZ3L122PT4100 | Excavation and Bedding and Pipe Installation for Fire Hydrant - (RD-L-12/2)-Z3-L122-PT | 2027-03-04 → 2027-09-01 (+181d) | 2027-03-06 → 2027-09-02 (+180d) |  |  |
| RHD4CZ3L122PT4200 | Valve Installation for Fire Hydrant - (RD-L-12/2)-Z3-L122-PT | 2027-03-07 → 2027-09-04 (+181d) | 2027-03-08 → 2027-09-05 (+181d) |  |  |
| RHD4CZ3L122PT4300 | Stem for Fire Hydrant - (RD-L-12/2)-Z3-L122-PT | 2027-03-13 → 2027-09-06 (+177d) | 2027-03-14 → 2027-09-07 (+177d) |  |  |
| RHD4CZ3L122PT4400 | Fire Installation for Fire Hydrant - (RD-L-12/2)-Z3-L122-PT | 2027-03-15 → 2027-09-08 (+177d) | 2027-03-16 → 2027-09-09 (+177d) |  |  |
| RHD4CZ3L122PT4500 | Protection Barriers for Fire Hydrant - (RD-L-12/2)-Z3-L122-PT | 2027-03-17 → 2027-09-11 (+178d) | 2027-03-18 → 2027-09-12 (+178d) |  |  |
| 1938 | **RHD4-02-002-L122-(PT)-Wash out Valve Chambers** | 2027-03-04 → 2027-09-01 (+181d) | 2027-03-25 → 2027-09-19 (+178d) |  |  |
| RHD4CZ3L122PT2101 | Excavation and Bedding for Wash out Valve Chambers for Potable Water Network - (RD-L-12/2)-Z3-L122-PT | 2027-03-04 → 2027-09-01 (+181d) | 2027-03-08 → 2027-09-05 (+181d) |  |  |
| RHD4CZ3L122PT2201 | PC works for Wash out Valve Chambers for Potable Water Network - (RD-L-12/2)-Z3-L122-PT | 2027-03-13 → 2027-09-06 (+177d) | 2027-03-16 → 2027-09-09 (+177d) |  |  |
| RHD4CZ3L122PT2301 | Installation for Wash out Valve Chambers for Potable Water Network - (RD-L-12/2)-Z3-L122-PT | 2027-03-17 → 2027-09-11 (+178d) | 2027-03-21 → 2027-09-14 (+177d) |  |  |
| RHD4CZ3L122PT2401 | Backfilling works for Wash out Valve Chambers for Potable Water Network - (RD-L-12/2)-Z3-L122-PT | 2027-03-22 → 2027-09-15 (+177d) | 2027-03-25 → 2027-09-19 (+178d) |  |  |
| 1944 | **RHD4-02-002-Z3-L122-Irrigation Network - IRR** | 2027-02-08 → 2027-07-27 (+169d) | 2027-04-12 → 2027-10-10 (+181d) |  |  |
| 1949 | **RHD4-02-002-L122-(IRR)-HDPE Pipes - 315 mm diameter** | 2027-02-27 → 2027-08-23 (+177d) | 2027-04-12 → 2027-10-10 (+181d) |  |  |
| RHD4CZ3L122IRR1104 | Excavation works for HDPE Pipline 315 mm - (RD-L-12/2)-Z3-L122-IRR | 2027-02-27 → 2027-08-23 (+177d) | 2027-03-13 → 2027-09-02 (+173d) |  |  |
| RHD4CZ3L122IRR1204 | Bedding works for HDPE Pipline 315 mm - (RD-L-12/2)-Z3-L122-IRR | 2027-03-14 → 2027-09-04 (+174d) | 2027-03-22 → 2027-09-12 (+174d) |  | resources Skilled labor [77.21 h]; Unskilled Labor [154.43 h]; Equipment Opreator [154.43 h]; Excavator-Poclain [77.21 h]; Dump Truck [77.21 h]; HDPE (315mm Diameter) - TSE - Depth: less than 1.5m [70.5 m]; HDPE (315mm Diameter) - TSE - Depth: more than 1.51m [0.3 m] → Skilled labor [77.21 h]; Unskilled Labor [154.4 h]; Equipment Opreator [154.4 h]; Excavator-Poclain [77.21 h]; Dump Truck [77.21 h]; HDPE (315mm Diameter) - TSE - Depth: less than 1.5m [70.5 m]; HDPE (315mm Diameter) - TSE - Depth: more than 1.51m [0.3 m] |
| RHD4CZ3L122IRR1304 | Installing for HDPE Pipline 315 mm - (RD-L-12/2)-Z3-L122-IRR | 2027-03-23 → 2027-09-13 (+174d) | 2027-03-28 → 2027-09-25 (+181d) | 5d → 10d | resources Unskilled Labor [205.61 h]; Plumber [102.8 h]; Equipment Opreator [102.8 h]; Boom Truck [102.8 h]; HDPE (315mm Diameter) - TSE - Depth: less than 1.5m [634.5 m]; HDPE (315mm Diameter) - TSE - Depth: more than 1.51m [2.42 m] → Unskilled Labor [205.6 h]; Plumber [102.8 h]; Equipment Opreator [102.8 h]; Boom Truck [102.8 h]; HDPE (315mm Diameter) - TSE - Depth: less than 1.5m [634.5 m]; HDPE (315mm Diameter) - TSE - Depth: more than 1.51m [2.42 m] |
| RHD4CZ3L122IRR1404 | Primary Test for HDPE Pipline 315 mm - (RD-L-12/2)-Z3-L122-IRR | 2027-03-29 → 2027-09-26 (+181d) | 2027-04-03 → 2027-09-30 (+180d) |  |  |
| RHD4CZ3L122IRR1504 | Backfilling and warning tape works for HDPE Pipline 315 mm - (RD-L-12/2)-Z3-L122-IRR | 2027-04-04 → 2027-10-02 (+181d) | 2027-04-12 → 2027-10-10 (+181d) |  | resources Skilled labor [77.21 h]; Unskilled Labor [154.43 h]; Equipment Opreator [154.43 h]; Excavator-Poclain [77.21 h]; Dump Truck [77.21 h]; HDPE (315mm Diameter) - TSE - Depth: less than 1.5m [282 m]; HDPE (315mm Diameter) - TSE - Depth: more than 1.51m [1.21 m] → Skilled labor [77.21 h]; Unskilled Labor [154.4 h]; Equipment Opreator [154.4 h]; Excavator-Poclain [77.21 h]; Dump Truck [77.21 h]; HDPE (315mm Diameter) - TSE - Depth: less than 1.5m [282 m]; HDPE (315mm Diameter) - TSE - Depth: more than 1.51m [1.21 m] |
| 1945 | **RHD4-02-002-L122-(IRR)-HDPE Pipes - 160 mm diameter** | 2027-02-08 → 2027-07-27 (+169d) | 2027-04-01 → 2027-09-29 (+181d) |  |  |
| RHD4CZ3L122IRR1100 | Excavation works for HDPE Pipline 160 mm - (RD-L-12/2)-Z3-L122-IRR | 2027-02-08 → 2027-07-27 (+169d) | 2027-02-09 → 2027-07-28 (+169d) |  |  |
| RHD4CZ3L122IRR1200 | Bedding works for HDPE Pipline 160 mm - (RD-L-12/2)-Z3-L122-IRR | 2027-02-10 → 2027-07-29 (+169d) | 2027-02-11 → 2027-07-31 (+170d) |  |  |
| RHD4CZ3L122IRR1300 | Installing for HDPE Pipline 160 mm - (RD-L-12/2)-Z3-L122-IRR | 2027-02-13 → 2027-08-01 (+169d) | 2027-02-14 → 2027-08-02 (+169d) |  |  |
| RHD4CZ3L122IRR1400 | Primary Test for HDPE Pipline 160 mm - (RD-L-12/2)-Z3-L122-IRR | 2027-03-29 → 2027-09-26 (+181d) | 2027-03-30 → 2027-09-27 (+181d) |  |  |
| RHD4CZ3L122IRR1500 | Backfilling and warning tape works for HDPE Pipline 160 mm - (RD-L-12/2)-Z3-L122-IRR | 2027-03-31 → 2027-09-28 (+181d) | 2027-04-01 → 2027-09-29 (+181d) |  |  |
| 1953 | **RHD4-02-002-L122-(IRR)-Gate Valves (Direct Buried)** | 2027-03-25 → 2027-09-21 (+180d) | 2027-03-31 → 2027-09-28 (+181d) |  |  |
| RHD4CZ3L122IRR3100 | Installation for Direct Buried Gate Valves - (RD-L-12/2)-Z3-L122-IRR | 2027-03-25 → 2027-09-21 (+180d) | 2027-03-28 → 2027-09-25 (+181d) |  |  |
| RHD4CZ3L122IRR3200 | Stem and Service box for Direct Buried Gate Valves - (RD-L-12/2)-Z3-L122-IRR | 2027-03-29 → 2027-09-26 (+181d) | 2027-03-31 → 2027-09-28 (+181d) |  |  |
| 1956 | **RHD4-02-002-L122-(IRR)-Wash out Chamber** | 2027-02-10 → 2027-07-29 (+169d) | 2027-02-18 → 2027-08-07 (+170d) |  |  |
| RHD4CZ3L122IRR2101 | Excavation and Bedding for Wash out Chamber for Irrigation Network - (RD-L-12/2)-Z3-L122-IRR | 2027-02-10 → 2027-07-29 (+169d) | 2027-02-11 → 2027-07-31 (+170d) |  |  |
| RHD4CZ3L122IRR2201 | PC works for Wash out Chamber for Irrigation Network - (RD-L-12/2)-Z3-L122-IRR | 2027-02-13 → 2027-08-01 (+169d) | 2027-02-14 → 2027-08-02 (+169d) |  |  |
| RHD4CZ3L122IRR2301 | Installation for Wash out Chamber for Irrigation Network - (RD-L-12/2)-Z3-L122-IRR | 2027-02-15 → 2027-08-03 (+169d) | 2027-02-16 → 2027-08-04 (+169d) |  |  |
| RHD4CZ3L122IRR2401 | Backfilling works for Wash out Chamber for Irrigation Network - (RD-L-12/2)-Z3-L122-IRR | 2027-02-17 → 2027-08-05 (+169d) | 2027-02-18 → 2027-08-07 (+170d) |  |  |
| 1957 | **RHD4-02-002-L122-(IRR)-Wash out Valves** | 2027-02-17 → 2027-08-05 (+169d) | 2027-02-21 → 2027-08-09 (+169d) |  |  |
| RHD4CZ3L122IRR3102 | Installation for Wash out Valve for Irrigation Network - (RD-L-12/2)-Z3-L122-IRR | 2027-02-17 → 2027-08-05 (+169d) | 2027-02-18 → 2027-08-07 (+170d) |  |  |
| RHD4CZ3L122IRR3202 | Stem and Service box for Wash out Valve for Irrigation Network - (RD-L-12/2)-Z3-L122-IRR | 2027-02-20 → 2027-08-08 (+169d) | 2027-02-21 → 2027-08-09 (+169d) |  |  |
| 1978 | **RHD4-02-002-Z3-L122-Medium Voltage Network - MV** | 2027-02-07 → 2027-07-25 (+168d) | 2027-04-07 → 2027-11-10 (+217d) |  |  |
| 1979 | **RHD4-02-002-L122-(MV)-Medium Voltage cable trench** | 2027-02-07 → 2027-07-25 (+168d) | 2027-03-24 → 2027-10-19 (+209d) |  |  |
| RHD4CZ3L122MV1100 | Excavation for Medium Voltage Trench - (RD-L-12/2)-Z3-L122-MV | 2027-02-07 → 2027-07-25 (+168d) | 2027-02-15 → 2027-08-16 (+182d) | 8d → 20d |  |
| RHD4CZ3L122MV1200 | Trench Backfilling for Medium Voltage Network - (RD-L-12/2)-Z3-L122-MV | 2027-03-16 → 2027-09-27 (+195d) | 2027-03-24 → 2027-10-19 (+209d) | 8d → 20d |  |
| 1980 | **RHD4-02-002-L122-(MV)-Medium Voltage duct banks** | 2027-02-16 → 2027-08-17 (+182d) | 2027-03-08 → 2027-09-05 (+181d) |  |  |
| RHD4CZ3L122MV2100 | Excavation of Duct Banks for Medium Voltage Network - (RD-L-12/2)-Z3-L122-MV | 2027-02-16 → 2027-08-17 (+182d) | 2027-02-20 → 2027-08-21 (+182d) |  |  |
| RHD4CZ3L122MV2200 | Installation of Duct Banks for Medium Voltage Network - (RD-L-12/2)-Z3-L122-MV | 2027-02-21 → 2027-08-22 (+182d) | 2027-02-28 → 2027-08-28 (+181d) |  |  |
| RHD4CZ3L122MV2300 | Pouring of Duct Banks for Medium Voltage Network - (RD-L-12/2)-Z3-L122-MV | 2027-03-01 → 2027-08-29 (+181d) | 2027-03-04 → 2027-09-01 (+181d) |  |  |
| RHD4CZ3L122MV2400 | Backfilling of Duct Banks for Medium Voltage Network - (RD-L-12/2)-Z3-L122-MV | 2027-03-06 → 2027-09-02 (+180d) | 2027-03-08 → 2027-09-05 (+181d) |  |  |

| ID | Task | Start | Finish | Duration | Other |
| --- | --- | --- | --- | --- | --- |
| 1981 | **RHD4-02-002-L122-(MV)-Medium Voltage cables 3Cx 500 mm²** | 2027-02-16 → 2027-08-17 (+182d) | 2027-04-07 → 2027-11-10 (+217d) |  |  |
| RHD4CZ3L122MV3100 | Installation of Medium Voltage Cables 3Cx 500 mm² - (RD-L-12/2)-Z3-L122-MV | 2027-02-16 → 2027-08-17 (+182d) | 2027-02-28 → 2027-09-05 (+189d) | 10d → 17d | resources Skilled labor [175.99 h]; Unskilled Labor [703.73 h]; Electrician [351.87 h]; Equipment Opreator [527.86 h]; Boom Truck [175.99 h]; Cable Laying Machine [351.87 h]; Cable 13.8 kV 3Cx 500 mm² Al/XLPE,/LLDPE / Unarmored [7269.81 m] → Skilled labor [176 h]; Unskilled Labor [703.73 h]; Electrician [351.87 h]; Equipment Opreator [527.86 h]; Boom Truck [176 h]; Cable Laying Machine [351.87 h]; Cable 13.8 kV 3Cx 500 mm² Al/XLPE,/LLDPE / Unarmored [7269.81 m] |
| RHD4CZ3L122MV3200 | Joints Installation of Medium Voltage Cables 3Cx 500 mm² - (RD-L-12/2)-Z3-L122-MV | 2027-03-01 → 2027-09-06 (+189d) | 2027-03-15 → 2027-09-26 (+195d) | 10d → 17d |  |
| RHD4CZ3L122MV3300 | Testing of Medium Voltage Cables 3Cx 500 mm² - (RD-L-12/2)-Z3-L122-MV | 2027-03-25 → 2027-10-20 (+209d) | 2027-04-05 → 2027-11-08 (+217d) | 10d → 17d | resources Skilled labor [175.99 h]; Unskilled Labor [703.73 h]; Electrician [351.87 h]; Cable 13.8 kV 3Cx 500 mm² Al/XLPE,/LLDPE / Unarmored [807.76 m] → Skilled labor [176 h]; Unskilled Labor [703.73 h]; Electrician [351.87 h]; Cable 13.8 kV 3Cx 500 mm² Al/XLPE,/LLDPE / Unarmored [807.76 m] |
| RHD4CZ3L122MV3400 | Termination of Medium Voltage Cables 3Cx 500 mm² - (RD-L-12/2)-Z3-L122-MV | 2027-04-06 → 2027-11-09 (+217d) | 2027-04-07 → 2027-11-10 (+217d) |  |  |
| 1982 | **RHD4-02-002-L122-(MV)-Medium Voltage cables 3Cx 50 mm²** | 2027-02-16 → 2027-08-17 (+182d) | 2027-04-01 → 2027-10-27 (+209d) |  |  |
| RHD4CZ3L122MV3101 | Installation of Medium Voltage Cables 3Cx 50 mm² - (RD-L-12/2)-Z3-L122-MV | 2027-02-16 → 2027-08-17 (+182d) | 2027-02-17 → 2027-08-18 (+182d) |  |  |
| RHD4CZ3L122MV3301 | Testing of Medium Voltage Cables 3Cx 50 mm² - (RD-L-12/2)-Z3-L122-MV | 2027-03-25 → 2027-10-20 (+209d) | 2027-03-27 → 2027-10-21 (+208d) |  |  |
| RHD4CZ3L122MV3401 | Termination of Medium Voltage Cables 3Cx 50 mm² - (RD-L-12/2)-Z3-L122-MV | 2027-03-28 → 2027-10-23 (+209d) | 2027-04-01 → 2027-10-27 (+209d) |  |  |
| 1984 | **RHD4-02-002-L122-(MV)-Unit Substations** | 2027-02-16 → 2027-08-17 (+182d) | 2027-03-03 → 2027-08-31 (+181d) |  |  |
| RHD4CZ3L122MV5100 | Excavation for Unit Substations for Medium Voltage Network - (RD-L-12/2)-Z3-L122-MV | 2027-02-16 → 2027-08-17 (+182d) | 2027-02-17 → 2027-08-18 (+182d) |  |  |
| RHD4CZ3L122MV5200 | Concrete Base Placement for Unit Substations for Medium Voltage Network - (RD-L-12/2)-Z3-L122-MV | 2027-02-18 → 2027-08-19 (+182d) | 2027-02-20 → 2027-08-21 (+182d) |  |  |
| RHD4CZ3L122MV5300 | Installation for Fences and doors for Medium Voltage Network - (RD-L-12/2)-Z3-L122-MV | 2027-02-21 → 2027-08-22 (+182d) | 2027-02-27 → 2027-08-26 (+180d) |  |  |
| RHD4CZ3L122MV5400 | Installation for Unit Substations for Medium Voltage Network - (RD-L-12/2)-Z3-L122-MV | 2027-02-28 → 2027-08-28 (+181d) | 2027-03-03 → 2027-08-31 (+181d) |  |  |
| 1985 | **RHD4-02-002-Z3-L122-Low Voltage Network - LV** | 2027-03-27 → 2027-09-20 (+177d) | 2027-05-24 → 2027-12-15 (+205d) |  |  |
| 1986 | **RHD4-02-002-L122-(LV)-Low Voltage duct banks** | 2027-03-27 → 2027-09-20 (+177d) | 2027-04-14 → 2027-10-10 (+179d) |  |  |
| RHD4CZ3L122LV2100 | Excavation of Duct Banks for Low Voltage Network - (RD-L-12/2)-Z3-L122-LV | 2027-03-27 → 2027-09-20 (+177d) | 2027-03-28 → 2027-09-21 (+177d) |  | resources Skilled labor [12.41 h]; Unskilled Labor [12.41 h]; Equipment Opreator [24.83 h]; Excavator-Poclain [12.41 h]; Dump Truck [12.41 h]; Duct bank for LV cables UPVC (4xø110mm) [1.71 m] → Skilled labor [12.41 h]; Unskilled Labor [12.41 h]; Equipment Opreator [24.8 h]; Excavator-Poclain [12.41 h]; Dump Truck [12.41 h]; Duct bank for LV cables UPVC (4xø110mm) [1.71 m] |
| RHD4CZ3L122LV2200 | Installation of Duct Banks for Low Voltage Network - (RD-L-12/2)-Z3-L122-LV | 2027-03-29 → 2027-09-22 (+177d) | 2027-03-30 → 2027-09-25 (+179d) |  |  |
| RHD4CZ3L122LV2300 | Pouring of Duct Banks for Low Voltage Network - (RD-L-12/2)-Z3-L122-LV | 2027-03-31 → 2027-09-26 (+179d) | 2027-04-06 → 2027-10-02 (+179d) |  |  |
| RHD4CZ3L122LV2400 | Backfilling of Duct Banks for Low Voltage Network - (RD-L-12/2)-Z3-L122-LV | 2027-04-07 → 2027-10-03 (+179d) | 2027-04-14 → 2027-10-10 (+179d) |  |  |
| 1989 | **RHD4-02-002-L122-(LV)-Low Voltage Distribution Pillars** | 2027-05-11 → 2027-12-07 (+210d) | 2027-05-24 → 2027-12-15 (+205d) |  |  |
| RHD4CZ3L122LV4100 | Leveling for Distribution Pillars for Low Voltage Network - (RD-L-12/2)-Z3-L122-LV | 2027-05-11 → 2027-12-07 (+210d) | 2027-05-13 → 2027-12-09 (+210d) |  | resources Skilled labor [27.23 h]; Unskilled Labor [54.45 h]; Equipment Opreator [10.89 h]; Excavator-Poclain [5.45 h]; Boom Truck [5.45 h]; 0.6/1 KV Low Voltage Distribution Pillars with main breaker MCCB type and 5 Outgoing feeders MCCB type [0.15 Unit]; 0.6/1 KV Low Voltage Distribution Panels for Industrial UPS - Cameras [0.15 Unit]; Supply and installation of KWH meter mounting frame including concrete block wall for installation of KWH meter according to the standards and specifications of SEC [0.45 Unit] → Skilled labor [27.2 h]; Unskilled Labor [54.45 h]; Equipment Opreator [10.89 h]; Excavator-Poclain [5.45 h]; Boom Truck [5.45 h]; 0.6/1 KV Low Voltage Distribution Pillars with main breaker MCCB type and 5 Outgoing feeders MCCB type [0.15 Unit]; 0.6/1 KV Low Voltage Distribution Panels for Industrial UPS - Cameras [0.15 Unit]; Supply and installation of KWH meter mounting frame including concrete block wall for installation of KWH meter according to the standards and specifications of SEC [0.45 Unit] |
| RHD4CZ3L122LV4200 | Lean Concrete for Distribution Pillars for Low Voltage Network - (RD-L-12/2)-Z3-L122-LV | 2027-05-19 → 2027-12-11 (+206d) | 2027-05-20 → 2027-12-12 (+206d) |  |  |
| RHD4CZ3L122LV4300 | Installation of Distribution Pillars for Low Voltage Network - (RD-L-12/2)-Z3-L122-LV | 2027-05-22 → 2027-12-13 (+205d) | 2027-05-24 → 2027-12-15 (+205d) |  | resources Skilled labor [27.23 h]; Unskilled Labor [108.9 h]; Electrician [54.45 h]; Equipment Opreator [27.23 h]; Boom Truck [27.23 h]; 0.6/1 KV Low Voltage Distribution Pillars with main breaker MCCB type and 5 Outgoing feeders MCCB type [0.6 Unit]; 0.6/1 KV Low Voltage Distribution Panels for Industrial UPS - Cameras [0.6 Unit]; Supply and installation of KWH meter mounting frame including concrete block wall for installation of KWH meter according to the standards and specifications of SEC [1.8 Unit] → Skilled labor [27.2 h]; Unskilled Labor [108.9 h]; Electrician [54.45 h]; Equipment Opreator [27.2 h]; Boom Truck [27.2 h]; 0.6/1 KV Low Voltage Distribution Pillars with main breaker MCCB type and 5 Outgoing feeders MCCB type [0.6 Unit]; 0.6/1 KV Low Voltage Distribution Panels for Industrial UPS - Cameras [0.6 Unit]; Supply and installation of KWH meter mounting frame including concrete block wall for installation of KWH meter according to the standards and specifications of SEC [1.8 Unit] |
| 4257 | **RHD4-02-002-L122-(LV)-Low Voltage Drawpit** | 2027-03-27 → 2027-09-20 (+177d) | 2027-03-30 → 2027-09-25 (+179d) |  |  |
| RHD4CZ3L122LV5100 | Excavation of Drawpit size 900x900x1000mm for Low Voltage Network - (RD-L-12/2)-Z3-L122-LV | 2027-03-27 → 2027-09-20 (+177d) | 2027-03-28 → 2027-09-21 (+177d) |  | resources Skilled labor [1.85 h]; Unskilled Labor [1.85 h]; Equipment Opreator [1.42 h]; Excavator-Poclain [0.76 h]; Dump Truck [0.76 h]; Drawpit with medium duty steel cover, size900x900x1000mm, [0.3 Unit] → Skilled labor [1.85 h]; Unskilled Labor [1.85 h]; Equipment Opreator [1.42 h]; Excavator-Poclain [0.8 h]; Dump Truck [0.8 h]; Drawpit with medium duty steel cover, size900x900x1000mm, [0.3 Unit] |
| RHD4CZ3L122LV5200 | Installation of Drawpit size 900x900x1000mm for Low Voltage Network - (RD-L-12/2)-Z3-L122-LV | 2027-03-29 → 2027-09-22 (+177d) | 2027-03-30 → 2027-09-25 (+179d) |  | resources Skilled labor [1.85 h]; Unskilled Labor [1.85 h]; Equipment Opreator [0.76 h]; Boom Truck [0.76 h]; Drawpit with medium duty steel cover, size900x900x1000mm, [1.7 Unit] → Skilled labor [1.85 h]; Unskilled Labor [1.85 h]; Equipment Opreator [0.8 h]; Boom Truck [0.8 h]; Drawpit with medium duty steel cover, size900x900x1000mm, [1.7 Unit] |
| 1988 | **RHD4-02-002-L122-(LV)-Low Voltage cables** | 2027-04-15 → 2027-11-11 (+210d) | 2027-05-19 → 2027-12-11 (+206d) |  |  |
| RHD4CZ3L122LV3100 | Excavation for Low Voltage Cables for Low Voltage Network - (RD-L-12/2)-Z3-L122-LV | 2027-04-15 → 2027-11-11 (+210d) | 2027-04-24 → 2027-11-20 (+210d) |  | resources Skilled labor [79.61 h]; Unskilled Labor [159.22 h]; Equipment Opreator [159.22 h]; Excavator-Poclain [79.61 h]; Boom Truck [79.61 h]; Cable, Copper 4x185mm2/ CU/XLPE/PVC [40.52 m]; Cable, Copper 4x70mm2/ CU/XLPE/PVC [5.23 m]; Cable, Copper 4x50mm2/ CU/XLPE/PVC +1x25mm2 CU/PVC [10.26 m]; Cable, Copper 3x10mm2/ CU/XLPE/SWA/PVC [309.39 m] → Skilled labor [79.61 h]; Unskilled Labor [159.2 h]; Equipment Opreator [159.2 h]; Excavator-Poclain [79.61 h]; Boom Truck [79.61 h]; Cable, Copper 4x185mm2/ CU/XLPE/PVC [40.52 m]; Cable, Copper 4x70mm2/ CU/XLPE/PVC [5.23 m]; Cable, Copper 4x50mm2/ CU/XLPE/PVC +1x25mm2 CU/PVC [10.26 m]; Cable, Copper 3x10mm2/ CU/XLPE/SWA/PVC [309.39 m] |
| RHD4CZ3L122LV3200 | Cable Laying of Low Voltage Cables for Low Voltage Network - (RD-L-12/2)-Z3-L122-LV | 2027-04-25 → 2027-11-21 (+210d) | 2027-05-02 → 2027-11-28 (+210d) |  |  |
| RHD4CZ3L122LV3300 | Warning tape and Backfill for Low Voltage Cables for Low Voltage Network - (RD-L-12/2)-Z3-L122-LV | 2027-05-03 → 2027-11-29 (+210d) | 2027-05-10 → 2027-12-06 (+210d) |  |  |
| RHD4CZ3L122LV3400 | Testing of Low Voltage Cables for Low Voltage Network - (RD-L-12/2)-Z3-L122-LV | 2027-05-11 → 2027-12-07 (+210d) | 2027-05-19 → 2027-12-11 (+206d) |  | resources Skilled labor [39.75 h]; Unskilled Labor [159.22 h]; Electrician [79.61 h]; Equipment Opreator [39.75 h]; Boom Truck [39.75 h]; Cable, Copper 4x185mm2/ CU/XLPE/PVC [10.13 m]; Cable, Copper 4x70mm2/ CU/XLPE/PVC [1.31 m]; Cable, Copper 4x50mm2/ CU/XLPE/PVC +1x25mm2 CU/PVC [2.57 m]; Cable, Copper 3x10mm2/ CU/XLPE/SWA/PVC [77.35 m] → Skilled labor [39.75 h]; Unskilled Labor [159.2 h]; Electrician [79.61 h]; Equipment Opreator [39.75 h]; Boom Truck [39.75 h]; Cable, Copper 4x185mm2/ CU/XLPE/PVC [10.13 m]; Cable, Copper 4x70mm2/ CU/XLPE/PVC [1.31 m]; Cable, Copper 4x50mm2/ CU/XLPE/PVC +1x25mm2 CU/PVC [2.57 m]; Cable, Copper 3x10mm2/ CU/XLPE/SWA/PVC [77.35 m] |
| 1991 | **RHD4-02-002-Z3-L122-Street Lighting Network - SL** | 2027-03-27 → 2027-09-20 (+177d) | 2027-12-11 → 2028-07-12 (+214d) |  |  |
| 1994 | **RHD4-02-002-L122-(SL)-Street Lighting cables** | 2027-09-30 → 2028-04-29 (+212d) | 2027-11-25 → 2028-06-27 (+215d) |  |  |
| RHD4CZ3L122SL3100 | Excavation for Street Lighting Cables for Street Lighting Network - (RD-L-12/2)-Z3-L122-SL | 2027-09-30 → 2028-04-29 (+212d) | 2027-10-17 → 2028-05-18 (+214d) |  |  |
| RHD4CZ3L122SL3200 | Cable Laying of Street Lighting Cables for Street Lighting Network - (RD-L-12/2)-Z3-L122-SL | 2027-10-18 → 2028-05-20 (+215d) | 2027-11-01 → 2028-06-03 (+215d) |  |  |
| RHD4CZ3L122SL3300 | Warning tape and Backfill for Street Lighting Cables for Street Lighting Network - (RD-L-12/2)-Z3-L122-SL | 2027-11-02 → 2028-06-04 (+215d) | 2027-11-16 → 2028-06-18 (+215d) |  |  |
| RHD4CZ3L122SL3400 | Testing of Street Lighting Cables for Street Lighting Network - (RD-L-12/2)-Z3-L122-SL | 2027-11-17 → 2028-06-19 (+215d) | 2027-11-25 → 2028-06-27 (+215d) |  |  |
| 1997 | **RHD4-02-002-L122-(SL)-Street Lighting Earthing System** | 2027-11-30 → 2028-07-02 (+215d) | 2027-12-01 → 2028-07-03 (+215d) |  |  |
| RHD4CZ3L122SL6100 | Installation of Earthing for Lighting Poles and Fedder Pillers for Street Lighting Network - (RD-L-12/2)-Z3-L122-SL | 2027-11-30 → 2028-07-02 (+215d) | 2027-12-01 → 2028-07-03 (+215d) |  |  |
| 5019 | **RHD4-02-002-L122-(SL)-Street Lighting duct banks** | 2027-03-27 → 2027-09-20 (+177d) | 2027-04-14 → 2027-10-10 (+179d) |  |  |
| RHD4CZ3L122SL2100 | Excavation of Duct Banks for Street Lighting Network - (RD-L-12/2)-Z3-L122-SL | 2027-03-27 → 2027-09-20 (+177d) | 2027-03-29 → 2027-09-22 (+177d) |  |  |
| RHD4CZ3L122SL2200 | Installation of Duct Banks for Street Lighting Network - (RD-L-12/2)-Z3-L122-SL | 2027-03-30 → 2027-09-25 (+179d) | 2027-04-03 → 2027-09-28 (+178d) |  |  |
| RHD4CZ3L122SL2300 | Pouring of Duct Banks for Street Lighting Network - (RD-L-12/2)-Z3-L122-SL | 2027-04-04 → 2027-09-29 (+178d) | 2027-04-08 → 2027-10-04 (+179d) |  |  |
| RHD4CZ3L122SL2400 | Backfilling of Duct Banks for Street Lighting Network - (RD-L-12/2)-Z3-L122-SL | 2027-04-10 → 2027-10-05 (+178d) | 2027-04-14 → 2027-10-10 (+179d) |  |  |
| 5020 | **RHD4-02-002-L122-(SL)-Street Lighting Drawpit** | 2027-04-10 → 2027-10-05 (+178d) | 2027-04-18 → 2027-10-13 (+178d) |  |  |
| RHD4CZ3L122SL5100 | Excavation of Drawpit size 600x600x900mm for Street Lighting Network - (RD-L-12/2)-Z3-L122-SL | 2027-04-10 → 2027-10-05 (+178d) | 2027-04-11 → 2027-10-06 (+178d) |  |  |
| RHD4CZ3L122SL5200 | Installation of Drawpit size 600x600x900mm for Street Lighting Network - (RD-L-12/2)-Z3-L122-SL | 2027-04-12 → 2027-10-07 (+178d) | 2027-04-18 → 2027-10-13 (+178d) |  |  |
| 1995 | **RHD4-02-002-L122-(SL)-Street Lighting Poles** | 2027-04-03 → 2027-10-20 (+200d) | 2027-12-11 → 2028-07-12 (+214d) |  |  |
| RHD4CZ3L122SL1100 | Excavation for RC Base for Lighting Poles for Street Lighting Network - (RD-L-12/2)-Z3-L122-SL | 2027-04-03 → 2027-10-20 (+200d) | 2027-04-11 → 2027-10-28 (+200d) |  |  |
| RHD4CZ3L122SL1200 | Installation for RC Base for Lighting Poles for Street Lighting Network - (RD-L-12/2)-Z3-L122-SL | 2027-09-11 → 2028-04-10 (+212d) | 2027-09-19 → 2028-04-18 (+212d) |  |  |
| RHD4CZ3L122SL1300 | Backfill for RC Base for Lighting Poles for Street Lighting Network - (RD-L-12/2)-Z3-L122-SL | 2027-09-20 → 2028-04-19 (+212d) | 2027-09-29 → 2028-04-27 (+211d) |  |  |
| RHD4CZ3L122SL1400 | Installation for Lighting Poles for Street Lighting Network - (RD-L-12/2)-Z3-L122-SL | 2027-11-17 → 2028-06-19 (+215d) | 2027-11-29 → 2028-07-01 (+215d) |  |  |
| RHD4CZ3L122SL1500 | Luminaire Installation for Lighting Poles for Street Lighting Network - (RD-L-12/2)-Z3-L122-SL | 2027-12-02 → 2028-07-04 (+215d) | 2027-12-11 → 2028-07-12 (+214d) |  |  |
| 2003 | **RHD4-02-002-Z3-L122-Telecommunications Network - TC** | 2026-08-25 → 2027-01-03 (+131d) | 2027-11-09 → 2028-07-08 (+242d) |  |  |
| 2004 | **RHD4-02-002-L122-(TC)-Telecommunications Ducts** | 2027-09-30 → 2028-04-29 (+212d) | 2027-11-09 → 2028-07-08 (+242d) |  |  |
| RHD4CZ3L122TC2100 | Excavation of HDPE Ducts for Telecom Network - (RD-L-12/2)-Z3-L122-TC | 2027-09-30 → 2028-04-29 (+212d) | 2027-10-07 → 2028-05-25 (+231d) | 7d → 21d |  |
| RHD4CZ3L122TC2200 | Installation of HDPE Ducts for Telecom Network - (RD-L-12/2)-Z3-L122-TC | 2027-10-09 → 2028-05-27 (+231d) | 2027-10-20 → 2028-06-07 (+231d) |  |  |
| RHD4CZ3L122TC2400 | Backfilling of HDPE Ducts for Telecom Network - (RD-L-12/2)-Z3-L122-TC | 2027-11-01 → 2028-06-14 (+226d) | 2027-11-09 → 2028-07-08 (+242d) | 8d → 21d |  |
| 2005 | **RHD4-02-002-L122-(TC)-Telecommunications Manholes** | 2027-10-09 → 2028-05-27 (+231d) | 2027-10-31 → 2028-06-13 (+226d) |  |  |
| RHD4CZ3L122TC5100 | Excavation for Manholes for Telecom Network - (RD-L-12/2)-Z3-L122-TC | 2027-10-09 → 2028-05-27 (+231d) | 2027-10-17 → 2028-06-04 (+231d) |  |  |
| RHD4CZ3L122TC5200 | Installation of Manholes for Telecom Network - (RD-L-12/2)-Z3-L122-TC | 2027-10-23 → 2028-06-05 (+226d) | 2027-10-31 → 2028-06-13 (+226d) |  |  |
| 2006 | **RHD4-02-002-L122-(TC)-Telecomminications Road Crossings** | 2026-08-25 → 2027-01-03 (+131d) | 2026-09-06 → 2027-02-08 (+155d) |  |  |
| RHD4CZ3L122TC3100 | Excavation for Road Crossings for Telecom Network - (RD-L-12/2)-Z3-L122-TC | 2026-08-25 → 2027-01-03 (+131d) | 2026-08-26 → 2027-01-04 (+131d) |  |  |
| RHD4CZ3L122TC3200 | Installation of Road Crossings for Telecom Network - (RD-L-12/2)-Z3-L122-TC | 2026-08-27 → 2027-01-30 (+156d) | 2026-08-29 → 2027-01-31 (+155d) |  |  |
| RHD4CZ3L122TC3300 | Pouring of Road Crossings for Telecom Network - (RD-L-12/2)-Z3-L122-TC | 2026-08-30 → 2027-02-01 (+155d) | 2026-08-31 → 2027-02-02 (+155d) |  |  |
| RHD4CZ3L122TC3400 | Backfilling of Road Crossings for Telecom Network - (RD-L-12/2)-Z3-L122-TC | 2026-09-01 → 2027-02-03 (+155d) | 2026-09-06 → 2027-02-08 (+155d) |  |  |
| 2007 | **RHD4-02-002-Z3-L122-Information and Communication Technologies - ICT** | 2026-08-27 → 2027-01-05 (+131d) | 2026-11-21 → 2027-05-19 (+179d) |  |  |
| 2008 | **RHD4-02-002-L122-(ICT)-Information and Communication Technologies Ducts** | 2026-09-16 → 2027-03-08 (+173d) | 2026-11-21 → 2027-05-19 (+179d) |  |  |
| RHD4CZ3L122ICT2100 | Excavation of HDPE Ducts for ICT Network - (RD-L-12/2)-Z3-L122-ICT | 2026-09-16 → 2027-03-08 (+173d) | 2026-10-10 → 2027-04-03 (+175d) |  |  |

| ID | Task | Start | Finish | Duration | Other |
| --- | --- | --- | --- | --- | --- |
| RHD4CZ3L122ICT2200 | Installation of HDPE Ducts for ICT Network - (RD-L-12/2)-Z3-L122-ICT | 2026-10-11 → 2027-04-04 (+175d) | 2026-10-28 → 2027-04-21 (+175d) |  |  |
| RHD4CZ3L122ICT2400 | Backfilling of HDPE Ducts for ICT Network - (RD-L-12/2)-Z3-L122-ICT | 2026-10-29 → 2027-04-22 (+175d) | 2026-11-21 → 2027-05-19 (+179d) |  |  |
| 2009 | **RHD4-02-002-L122-(ICT)-Information and Communication Technologies Manholes** | 2026-10-11 → 2027-04-04 (+175d) | 2026-10-28 → 2027-04-21 (+175d) |  |  |
| RHD4CZ3L122ICT5100 | Excavation for Manholes for ICT Network - (RD-L-12/2)-Z3-L122-ICT | 2026-10-11 → 2027-04-04 (+175d) | 2026-10-19 → 2027-04-12 (+175d) |  |  |
| RHD4CZ3L122ICT5200 | Installation of Manholes for ICT Network - (RD-L-12/2)-Z3-L122-ICT | 2026-10-20 → 2027-04-13 (+175d) | 2026-10-28 → 2027-04-21 (+175d) |  |  |
| 2010 | **RHD4-02-002-L122-(ICT)-Information and Communication Technologies Road Crossings** | 2026-08-27 → 2027-01-05 (+131d) | 2026-09-15 → 2027-03-07 (+173d) |  |  |
| RHD4CZ3L122ICT3100 | Excavation for Road Crossings for ICT Network - (RD-L-12/2)-Z3-L122-ICT | 2026-08-27 → 2027-01-05 (+131d) | 2026-08-31 → 2027-01-09 (+131d) |  | resources Skilled labor [9.58 h]; Unskilled Labor [9.58 h]; Equipment Opreator [19.06 h]; Excavator-Poclain [9.58 h]; Dump Truck [9.58 h]; Road crossing ducts, (2*50mm) HDPE -ICT [1.75 m] → Skilled labor [9.6 h]; Unskilled Labor [9.6 h]; Equipment Opreator [19.06 h]; Excavator-Poclain [9.6 h]; Dump Truck [9.6 h]; Road crossing ducts, (2*50mm) HDPE -ICT [1.75 m] |
| RHD4CZ3L122ICT3200 | Installation of Road Crossings for ICT Network - (RD-L-12/2)-Z3-L122-ICT | 2026-09-01 → 2027-02-20 (+172d) | 2026-09-02 → 2027-02-21 (+172d) |  |  |
| RHD4CZ3L122ICT3300 | Pouring of Road Crossings for ICT Network - (RD-L-12/2)-Z3-L122-ICT | 2026-09-03 → 2027-02-23 (+173d) | 2026-09-08 → 2027-02-28 (+173d) |  |  |
| RHD4CZ3L122ICT3400 | Backfilling of Road Crossings for ICT Network - (RD-L-12/2)-Z3-L122-ICT | 2026-09-09 → 2027-03-01 (+173d) | 2026-09-15 → 2027-03-07 (+173d) |  | resources Skilled labor [9.58 h]; Unskilled Labor [9.58 h]; Equipment Opreator [3.81 h]; Excavator-Poclain [3.81 h]; Road crossing ducts, (2*50mm) HDPE -ICT [2.62 m] → Skilled labor [9.6 h]; Unskilled Labor [9.6 h]; Equipment Opreator [3.81 h]; Excavator-Poclain [3.81 h]; Road crossing ducts, (2*50mm) HDPE -ICT [2.62 m] |
| 2011 | **RHD4-02-002-Z3-L122-Security Network - CCTV** | 2027-11-15 → 2028-07-09 (+237d) | 2027-12-12 → 2028-08-24 (+256d) |  |  |
| 2012 | **RHD4-02-002-L122-(CCTV)-Civil Works** | 2027-11-15 → 2028-07-09 (+237d) | 2027-11-20 → 2028-07-19 (+242d) |  |  |
| RHD4CZ3L122CCTV2100 | Civil Works for Security Network - (RD-L-12/2)-Z3-L122-CCTV | 2027-11-15 → 2028-07-09 (+237d) | 2027-11-20 → 2028-07-19 (+242d) | 5d → 10d |  |
| 2013 | **RHD4-02-002-L122-(CCTV)-CCTV Poles** | 2027-11-21 → 2028-07-20 (+242d) | 2027-12-01 → 2028-07-31 (+243d) |  |  |
| RHD4CZ3L122CCTV1100 | Excavation for RC Base for CCTV Poles for Security Network - (RD-L-12/2)-Z3-L122-CCTV | 2027-11-21 → 2028-07-20 (+242d) | 2027-11-22 → 2028-07-22 (+243d) |  |  |
| RHD4CZ3L122CCTV1200 | Installation for RC Base for CCTV Poles for Security Network - (RD-L-12/2)-Z3-L122-CCTV | 2027-11-23 → 2028-07-23 (+243d) | 2027-11-24 → 2028-07-24 (+243d) |  |  |
| RHD4CZ3L122CCTV1300 | Backfill for RC Base for CCTV Poles for Security Network - (RD-L-12/2)-Z3-L122-CCTV | 2027-11-25 → 2028-07-25 (+243d) | 2027-11-27 → 2028-07-26 (+242d) |  |  |
| RHD4CZ3L122CCTV1400 | Installation for CCTV Poles for Security Network - (RD-L-12/2)-Z3-L122-CCTV | 2027-11-28 → 2028-07-27 (+242d) | 2027-11-29 → 2028-07-29 (+243d) |  |  |
| RHD4CZ3L122CCTV1500 | Protection post Installation for CCTV Poles for Security Network - (RD-L-12/2)-Z3-L122-CCTV | 2027-11-30 → 2028-07-30 (+243d) | 2027-12-01 → 2028-07-31 (+243d) |  |  |
| 2014 | **RHD4-02-002-L122-(CCTV)-Camera** | 2027-12-02 → 2028-08-01 (+243d) | 2027-12-04 → 2028-08-02 (+242d) |  |  |
| RHD4CZ3L122CCTV3100 | Installation for Cameras for Security Network - (RD-L-12/2)-Z3-L122-CCTV | 2027-12-02 → 2028-08-01 (+243d) | 2027-12-04 → 2028-08-02 (+242d) |  |  |
| 2015 | **RHD4-02-002-L122-(CCTV)-Power and Infrastructure** | 2027-11-30 → 2028-07-30 (+243d) | 2027-12-04 → 2028-08-02 (+242d) |  |  |
| RHD4CZ3L122CCTV4100 | Installation of Power outlet, UPS and midspan for PTZ Camerafor Cameras for Security Network - (RD-L-12/2)-Z3-L122-CCTV | 2027-11-30 → 2028-07-30 (+243d) | 2027-12-01 → 2028-07-31 (+243d) |  |  |
| RHD4CZ3L122CCTV4200 | Short Range Wireless PoP wireless Bridgefor CCTV Poles for Security Network - (RD-L-12/2)-Z3-L122-CCTV | 2027-12-02 → 2028-08-01 (+243d) | 2027-12-04 → 2028-08-02 (+242d) |  |  |
| 2017 | **RHD4-02-002-L122-(CCTV)-CCTV Panels and Components** | 2027-12-05 → 2028-08-03 (+242d) | 2027-12-12 → 2028-08-24 (+256d) |  |  |
| RHD4CZ3L122CCTV6100 | Installation for CCTV Panels for Security Network - (RD-L-12/2)-Z3-L122-CCTV | 2027-12-05 → 2028-08-03 (+242d) | 2027-12-12 → 2028-08-24 (+256d) | 7d → 19d |  |
| 1461 | **RHD4-02-002-Z3-C083** | 2026-08-23 → 2026-12-31 (+130d) | 2028-01-29 → 2028-10-12 (+257d) |  |  |
| 567 | **RHD4-02-002-Z3-C083-Sewage Network - SW** | 2026-11-14 → 2027-05-26 (+193d) | 2026-12-26 → 2027-07-07 (+193d) |  |  |
| 577 | **RHD4-02-002-C083-(SW)-MH Works - 1200 mm diameter** | 2026-12-02 → 2027-06-14 (+194d) | 2026-12-26 → 2027-07-07 (+193d) |  |  |
| RHD4CZ3C083SW3100 | Excavation and PC Blinding works for MH 1200 mm - (RD-C-8 /3)-Z3-C083-SW | 2026-12-02 → 2027-06-14 (+194d) | 2026-12-05 → 2027-06-16 (+193d) |  |  |
| RHD4CZ3C083SW3200 | Installation of Base for MH 1200 mm - (RD-C-8 /3)-Z3-C083-SW | 2026-12-06 → 2027-06-17 (+193d) | 2026-12-10 → 2027-06-22 (+194d) |  |  |
| RHD4CZ3C083SW3300 | MH Ring and C.Slab works and Backfilling works for MH 1200 mm - (RD-C-8 /3)-Z3-C083-SW | 2026-12-12 → 2027-06-23 (+193d) | 2026-12-16 → 2027-06-28 (+194d) |  |  |
| RHD4CZ3C083SW3400 | Steel Cover for MH 1200 mm - (RD-C-8 /3)-Z3-C083-SW | 2026-12-17 → 2027-06-29 (+194d) | 2026-12-20 → 2027-07-01 (+193d) |  |  |
| RHD4CZ3C083SW3500 | Finishing, Benching, Testing works for MH 1200 mm - (RD-C-8 /3)-Z3-C083-SW | 2026-12-21 → 2027-07-03 (+194d) | 2026-12-26 → 2027-07-07 (+193d) |  |  |
| 573 | **RHD4-02-002-C083-(SW)-UPVC Pipes - 200 mm diameter** | 2026-11-14 → 2027-05-26 (+193d) | 2026-12-01 → 2027-06-13 (+194d) |  |  |
| RHD4CZ3C083SW2100 | Excavation works for UPVC Pipe Line 200 mm - (RD-C-8 /3)-Z3-C083-SW | 2026-11-14 → 2027-05-26 (+193d) | 2026-11-16 → 2027-05-29 (+194d) |  |  |
| RHD4CZ3C083SW2200 | Bedding works for UPVC Pipe Line 200 mm - (RD-C-8 /3)-Z3-C083-SW | 2026-11-17 → 2027-05-30 (+194d) | 2026-11-19 → 2027-06-01 (+194d) |  |  |
| RHD4CZ3C083SW2300 | Installing for UPVC Pipe Line 200 mm - (RD-C-8 /3)-Z3-C083-SW | 2026-11-21 → 2027-06-02 (+193d) | 2026-11-24 → 2027-06-06 (+194d) |  |  |
| RHD4CZ3C083SW2400 | Primary Test for UPVC Pipe Line 200 mm - (RD-C-8 /3)-Z3-C083-SW | 2026-11-25 → 2027-06-07 (+194d) | 2026-11-28 → 2027-06-09 (+193d) |  |  |
| RHD4CZ3C083SW2500 | Backfilling and warning tape works for UPVC Pipe Line 200 mm - (RD-C-8 /3)-Z3-C083-SW | 2026-11-29 → 2027-06-10 (+193d) | 2026-12-01 → 2027-06-13 (+194d) |  |  |
| 1640 | **RHD4-02-002-Z3-C083-Road Works - RD** | 2026-09-19 → 2027-01-31 (+134d) | 2028-01-29 → 2028-10-12 (+257d) |  |  |
| 1641 | **RHD4-02-002-C083-(RD)-Subgrade** | 2026-09-19 → 2027-01-31 (+134d) | 2026-09-21 → 2027-02-03 (+135d) |  |  |
| RHD4CZ3C083RD1100 | Supply, lay and compaction subgrade compacted thickness 300 mm for Roads - (RD-C-8 /3)-Z3-C083-RD | 2026-09-19 → 2027-01-31 (+134d) | 2026-09-21 → 2027-02-03 (+135d) | 3d → 4d |  |
| 1642 | **RHD4-02-002-C083-(RD)-Aggregate Base Course** | 2026-09-22 → 2027-02-04 (+135d) | 2026-09-27 → 2027-02-08 (+134d) |  |  |
| RHD4CZ3C083RD2100 | Supply, lay and compaction Aggregate base course compacted thickness 300 mmfor Roads - (RD-C-8 /3)-Z3-C083-RD | 2026-09-22 → 2027-02-04 (+135d) | 2026-09-27 → 2027-02-08 (+134d) |  |  |
| 1643 | **RHD4-02-002-C083-(RD)-Bituminous base course Two Layers, including (MC1)&(RC2)** | 2026-09-28 → 2027-02-09 (+134d) | 2027-07-01 → 2027-12-14 (+166d) |  |  |
| RHD4CZ3C083RD3100 | Supply, lay and Asphaltic base course including Prime Coat (MC1) for 1st Layer - (RD-C-8 /3)-Z3-C083-RD | 2026-09-28 → 2027-02-09 (+134d) | 2026-09-30 → 2027-02-13 (+136d) | 3d → 4d |  |
| RHD4CZ3C083RD3200 | Supply, lay and Asphaltic base course including Tack Coat (RC2) for 2nd Layer - (RD-C-8 /3)-Z3-C083-RD | 2027-06-28 → 2027-12-11 (+166d) | 2027-07-01 → 2027-12-14 (+166d) |  |  |
| 1645 | **RHD4-02-002-C083-(RD)-Precast Concrete Curb** | 2027-07-03 → 2027-12-15 (+165d) | 2027-07-07 → 2027-12-27 (+173d) |  |  |
| RHD4CZ3C083RD5100 | Supply and installation Precast Concrete Kerb for Roads - (RD-C-8 /3)-Z3-C083-RD | 2027-07-03 → 2027-12-15 (+165d) | 2027-07-07 → 2027-12-27 (+173d) | 5d → 11d |  |
| 1648 | **RHD4-02-002-C083-(RD)-Traffic Signage** | 2028-01-16 → 2028-09-30 (+258d) | 2028-01-22 → 2028-10-05 (+257d) |  |  |
| RHD4CZ3C083RD8100 | Installation of Traffic Signage for Road Network - (RD-C-8 /3)-Z3-C083-RD | 2028-01-16 → 2028-09-30 (+258d) | 2028-01-22 → 2028-10-05 (+257d) |  | resources Skilled labor [130.68 h]; Unskilled Labor [65.34 h]; Electrician [3.27 h]; Equipment Opreator [14.38 h]; Boom Truck [13.07 h]; Concrete Mixer Truck [1.31 h]; Traffic signs, ground mounted, 1 Sheet Aluminium, (breakaway)Single post [3 nr] → Skilled labor [130.68 h]; Unskilled Labor [65.34 h]; Electrician [3.27 h]; Equipment Opreator [14.4 h]; Boom Truck [13.07 h]; Concrete Mixer Truck [1.31 h]; Traffic signs, ground mounted, 1 Sheet Aluminium, (breakaway)Single post [3 nr] |
| 1644 | **RHD4-02-002-C083-(RD)-Bituminous concrete wearing course including tack coat (RC2)** | 2028-01-23 → 2028-10-07 (+258d) | 2028-01-29 → 2028-10-12 (+257d) |  |  |
| RHD4CZ3C083RD4100 | Supply, lay and compaction Asphaltic wearing course including tack Coat (RC2)for Road Network - (RD-C-8 /3)-Z3-C083-RD | 2028-01-23 → 2028-10-07 (+258d) | 2028-01-29 → 2028-10-12 (+257d) |  |  |
| 1647 | **RHD4-02-002-C083-(RD)-Pavement Marking** | 2027-12-27 → 2028-08-09 (+226d) | 2027-12-29 → 2028-08-16 (+231d) |  |  |
| RHD4CZ3C083RD7100 | Pavement Markings for Road Network - (RD-C-8 /3)-Z3-C083-RD | 2027-12-27 → 2028-08-09 (+226d) | 2027-12-29 → 2028-08-16 (+231d) | 3d → 7d |  |
| 1465 | **RHD4-02-002-Z3-C083-Storm Network - ST** | 2026-08-23 → 2026-12-31 (+130d) | 2026-10-18 → 2027-03-31 (+164d) |  |  |
| 5251 | **RHD4-02-002-C083-(ST)-GRP Pipes - 600 mm diameter** | 2026-08-29 → 2027-01-06 (+130d) | 2026-09-08 → 2027-01-17 (+131d) |  |  |
| RHD4CZ3C083ST1102 | Excavation works for GRP Pipe Line 600 mm - (RD-C-8 /3)-Z3-C083-ST | 2026-08-29 → 2027-01-06 (+130d) | 2026-08-30 → 2027-01-07 (+130d) |  |  |
| RHD4CZ3C083ST1202 | Bedding works for GRP Pipe Line 600 mm - (RD-C-8 /3)-Z3-C083-ST | 2026-08-31 → 2027-01-09 (+131d) | 2026-09-01 → 2027-01-10 (+131d) |  |  |
| RHD4CZ3C083ST1302 | Installing for GRP Pipe Line 600 mm - (RD-C-8 /3)-Z3-C083-ST | 2026-09-02 → 2027-01-11 (+131d) | 2026-09-03 → 2027-01-12 (+131d) |  |  |
| RHD4CZ3C083ST1402 | Primary Test for GRP Pipe Line 600 mm - (RD-C-8 /3)-Z3-C083-ST | 2026-09-05 → 2027-01-13 (+130d) | 2026-09-06 → 2027-01-14 (+130d) |  |  |
| RHD4CZ3C083ST1502 | Backfilling and warning tape works for GRP Pipe Line 600 mm - (RD-C-8 /3)-Z3-C083-ST | 2026-09-07 → 2027-01-16 (+131d) | 2026-09-08 → 2027-01-17 (+131d) |  |  |
| 710 | **RHD4-02-002-C083-(ST)-GRP Pipes - 500 mm diameter** | 2026-08-31 → 2027-01-09 (+131d) | 2026-09-13 → 2027-01-21 (+130d) |  |  |
| RHD4CZ3C083ST1101 | Excavation works for GRP Pipe Line 500 mm - (RD-C-8 /3)-Z3-C083-ST | 2026-08-31 → 2027-01-09 (+131d) | 2026-09-01 → 2027-01-10 (+131d) |  | resources Skilled labor [20.26 h]; Unskilled Labor [20.26 h]; Equipment Opreator [24.39 h]; Excavator-Poclain [20.26 h]; Dump Truck [4.03 h]; GRP (500mm Diameter) - ST - Depth less than 1.5 m [26.02 m]; GRP (500mm Diameter) - ST - Depth: 1.51m - 2.5m [18.12 m]; GRP (500mm Diameter) - ST - Depth: 2.51m - 3.5m → Skilled labor [20.26 h]; Unskilled Labor [20.26 h]; Equipment Opreator [24.39 h]; Excavator-Poclain [20.26 h]; Dump Truck [4 h]; GRP (500mm Diameter) - ST - Depth less than 1.5 m [26.02 m]; GRP (500mm Diameter) - ST - Depth: 1.51m - 2.5m [18.12 m]; GRP (500mm Diameter) - ST - Depth: 2.51m - 3.5m |
| RHD4CZ3C083ST1201 | Bedding works for GRP Pipe Line 500 mm - (RD-C-8 /3)-Z3-C083-ST | 2026-09-02 → 2027-01-11 (+131d) | 2026-09-03 → 2027-01-12 (+131d) |  | resources Skilled labor [18.84 h]; Unskilled Labor [37.57 h]; Equipment Opreator [37.57 h]; Excavator-Poclain [18.84 h]; Dump Truck [18.84 h]; GRP (500mm Diameter) - ST - Depth less than 1.5 m [13.01 m]; GRP (500mm Diameter) - ST - Depth: 1.51m - 2.5m [6.04 m]; GRP (500mm Diameter) - ST - Depth: 2.51m - 3.5m → Skilled labor [18.84 h]; Unskilled Labor [37.6 h]; Equipment Opreator [37.6 h]; Excavator-Poclain [18.84 h]; Dump Truck [18.84 h]; GRP (500mm Diameter) - ST - Depth less than 1.5 m [13.01 m]; GRP (500mm Diameter) - ST - Depth: 1.51m - 2.5m [6.04 m]; GRP (500mm Diameter) - ST - Depth: 2.51m - 3.5m |
| RHD4CZ3C083ST1301 | Installing for GRP Pipe Line 500 mm - (RD-C-8 /3)-Z3-C083-ST | 2026-09-05 → 2027-01-13 (+130d) | 2026-09-07 → 2027-01-16 (+131d) |  |  |
| RHD4CZ3C083ST1401 | Primary Test for GRP Pipe Line 500 mm - (RD-C-8 /3)-Z3-C083-ST | 2026-09-08 → 2027-01-17 (+131d) | 2026-09-09 → 2027-01-18 (+131d) |  |  |
| RHD4CZ3C083ST1501 | Backfilling and warning tape works for GRP Pipe Line 500 mm - (RD-C-8 /3)-Z3-C083-ST | 2026-09-10 → 2027-01-19 (+131d) | 2026-09-13 → 2027-01-21 (+130d) |  |  |
| 1482 | **RHD4-02-002-C083-(ST)-MH Works - 1200 mm diameter** | 2026-08-23 → 2026-12-31 (+130d) | 2026-10-18 → 2027-03-31 (+164d) |  |  |

| ID | Task | Start | Finish | Duration | Other |
| --- | --- | --- | --- | --- | --- |
| RHD4CZ3C083ST3100 | Excavation and PC Blinding works for MH 1200 mm - (RD-C-8 /3)-Z3-C083-ST | 2026-08-23 → 2026-12-31 (+130d) | 2026-08-27 → 2027-01-05 (+131d) |  |  |
| RHD4CZ3C083ST3200 | Installation of Base for MH 1200 mm - (RD-C-8 /3)-Z3-C083-ST | 2026-08-29 → 2027-01-06 (+130d) | 2026-09-02 → 2027-01-11 (+131d) |  |  |
| RHD4CZ3C083ST3300 | MH Ring and C.Slab works and Backfilling works for MH 1200 mm - (RD-C-8 /3)-Z3-C083-ST | 2026-09-03 → 2027-01-12 (+131d) | 2026-09-08 → 2027-01-17 (+131d) |  | resources Skilled labor [52.6 h]; Unskilled Labor [52.6 h]; Equipment Opreator [36.81 h]; Boom Truck [21.02 h]; Concrete Mixer Truck [15.79 h]; MH (1200mm Diameter) - ST - depth 1.50 - 2.5m [3.5 nr]; MH (1200mm Diameter) - ST - depth 2.51 - 3.5m [1.05 nr] → Skilled labor [52.6 h]; Unskilled Labor [52.6 h]; Equipment Opreator [36.8 h]; Boom Truck [21.02 h]; Concrete Mixer Truck [15.79 h]; MH (1200mm Diameter) - ST - depth 1.50 - 2.5m [3.5 nr]; MH (1200mm Diameter) - ST - depth 2.51 - 3.5m [1.05 nr] |
| RHD4CZ3C083ST3400 | Steel Cover for MH 1200 mm - (RD-C-8 /3)-Z3-C083-ST | 2026-10-07 → 2027-03-21 (+165d) | 2026-10-12 → 2027-03-25 (+164d) |  | resources Skilled labor [47.16 h]; Unskilled Labor [94.42 h]; Equipment Opreator [9.47 h]; Boom Truck [9.47 h]; MH (1200mm Diameter) - ST - depth 1.50 - 2.5m [0.5 nr]; MH (1200mm Diameter) - ST - depth 2.51 - 3.5m [0.15 nr] → Skilled labor [47.16 h]; Unskilled Labor [94.4 h]; Equipment Opreator [9.47 h]; Boom Truck [9.47 h]; MH (1200mm Diameter) - ST - depth 1.50 - 2.5m [0.5 nr]; MH (1200mm Diameter) - ST - depth 2.51 - 3.5m [0.15 nr] |
| RHD4CZ3C083ST3500 | Finishing, Benching, Testing works for MH 1200 mm - (RD-C-8 /3)-Z3-C083-ST | 2026-10-13 → 2027-03-27 (+165d) | 2026-10-18 → 2027-03-31 (+164d) |  | resources Skilled labor [47.16 h]; Unskilled Labor [94.42 h]; Plumber [47.16 h]; Equipment Opreator [9.47 h]; Water Truck [9.47 h]; MH (1200mm Diameter) - ST - depth 1.50 - 2.5m [1 nr]; MH (1200mm Diameter) - ST - depth 2.51 - 3.5m [0.3 nr] → Skilled labor [47.16 h]; Unskilled Labor [94.4 h]; Plumber [47.16 h]; Equipment Opreator [9.47 h]; Water Truck [9.47 h]; MH (1200mm Diameter) - ST - depth 1.50 - 2.5m [1 nr]; MH (1200mm Diameter) - ST - depth 2.51 - 3.5m [0.3 nr] |
| 1466 | **RHD4-02-002-C083-(ST)-GRP Pipes - 400 mm diameter** | 2026-09-09 → 2027-01-18 (+131d) | 2026-09-20 → 2027-01-28 (+130d) |  |  |
| RHD4CZ3C083ST1100 | Excavation works for GRP Pipe Line 400 mm - (RD-C-8 /3)-Z3-C083-ST | 2026-09-09 → 2027-01-18 (+131d) | 2026-09-10 → 2027-01-19 (+131d) |  | resources Skilled labor [9.58 h]; Unskilled Labor [9.58 h]; Equipment Opreator [11.54 h]; Excavator-Poclain [9.58 h]; Dump Truck [1.96 h]; GRP (400mm Diameter) - ST - Depth less than 1.5 m [20.49 m]; GRP (400mm Diameter) - ST - Depth: 1.51m - 2.5 m → Skilled labor [9.6 h]; Unskilled Labor [9.6 h]; Equipment Opreator [11.54 h]; Excavator-Poclain [9.6 h]; Dump Truck [1.96 h]; GRP (400mm Diameter) - ST - Depth less than 1.5 m [20.49 m]; GRP (400mm Diameter) - ST - Depth: 1.51m - 2.5 m |
| RHD4CZ3C083ST1200 | Bedding works for GRP Pipe Line 400 mm - (RD-C-8 /3)-Z3-C083-ST | 2026-09-12 → 2027-01-20 (+130d) | 2026-09-13 → 2027-01-21 (+130d) |  |  |
| RHD4CZ3C083ST1300 | Installing for GRP Pipe Line 400 mm - (RD-C-8 /3)-Z3-C083-ST | 2026-09-14 → 2027-01-23 (+131d) | 2026-09-15 → 2027-01-24 (+131d) |  |  |
| RHD4CZ3C083ST1400 | Primary Test for GRP Pipe Line 400 mm - (RD-C-8 /3)-Z3-C083-ST | 2026-09-16 → 2027-01-25 (+131d) | 2026-09-17 → 2027-01-26 (+131d) |  |  |
| RHD4CZ3C083ST1500 | Backfilling and warning tape works for GRP Pipe Line 400 mm - (RD-C-8 /3)-Z3-C083-ST | 2026-09-19 → 2027-01-27 (+130d) | 2026-09-20 → 2027-01-28 (+130d) |  |  |
| 1480 | **RHD4-02-002-C083-(ST)-UPVC Pipes - 300 mm diameter** | 2026-09-21 → 2027-01-30 (+131d) | 2026-10-06 → 2027-03-20 (+165d) |  |  |
| RHD4CZ3C083ST2100 | Excavation works for UPVC Pipe Line 300 mm - (RD-C-8 /3)-Z3-C083-ST | 2026-09-21 → 2027-01-30 (+131d) | 2026-09-24 → 2027-02-01 (+130d) |  |  |
| RHD4CZ3C083ST2200 | Bedding works for UPVC Pipe Line 300 mm - (RD-C-8 /3)-Z3-C083-ST | 2026-09-26 → 2027-02-02 (+129d) | 2026-09-27 → 2027-02-03 (+129d) |  |  |
| RHD4CZ3C083ST2300 | Installing for UPVC Pipe Line 300 mm - (RD-C-8 /3)-Z3-C083-ST | 2026-09-28 → 2027-02-04 (+129d) | 2026-09-30 → 2027-02-07 (+130d) |  | resources Unskilled Labor [45.63 h]; Plumber [22.87 h]; UPVC (300mm Diameter) - ST - Depth less than 1.5 [224.39 m]; UPVC (300mm Diameter) - ST - Depth: 1.51m - 2.5m → Unskilled Labor [45.6 h]; Plumber [22.87 h]; UPVC (300mm Diameter) - ST - Depth less than 1.5 [224.39 m]; UPVC (300mm Diameter) - ST - Depth: 1.51m - 2.5m |
| RHD4CZ3C083ST2400 | Primary Test for UPVC Pipe Line 300 mm - (RD-C-8 /3)-Z3-C083-ST | 2026-10-01 → 2027-03-15 (+165d) | 2026-10-03 → 2027-03-16 (+164d) |  |  |
| RHD4CZ3C083ST2500 | Backfilling and warning tape works for UPVC Pipe Line 300 mm - (RD-C-8 /3)-Z3-C083-ST | 2026-10-04 → 2027-03-17 (+164d) | 2026-10-06 → 2027-03-20 (+165d) |  |  |
| 1488 | **RHD4-02-002-C083-(ST)-Concrete Encasement** | 2026-09-29 → 2027-02-06 (+130d) | 2026-09-30 → 2027-02-07 (+130d) |  |  |
| RHD4CZ3C083ST6100 | Pipe Encasement for Storm Pipelines - (RD-C-8 /3)-Z3-C083-ST | 2026-09-29 → 2027-02-06 (+130d) | 2026-09-30 → 2027-02-07 (+130d) |  |  |
| 1489 | **RHD4-02-002-Z3-C083-Catch Basin - ST** | 2026-09-09 → 2027-01-18 (+131d) | 2026-10-24 → 2027-04-06 (+164d) |  |  |
| 1490 | **RHD4-02-002-C083-(ST)-Single Catch Basin Works** | 2026-09-09 → 2027-01-18 (+131d) | 2026-10-24 → 2027-04-06 (+164d) |  |  |
| RHD4CZ3C083ST7100 | Excavation works for Single Catch Basin - (RD-C-8 /3)-Z3-C083-ST | 2026-09-09 → 2027-01-18 (+131d) | 2026-09-12 → 2027-01-20 (+130d) |  | resources Skilled labor [26.14 h]; Unskilled Labor [52.27 h]; Equipment Opreator [39.21 h]; Excavator-Poclain [26.14 h]; Dump Truck [13.07 h]; Single Catch basin - ST [6 nr] → Skilled labor [26.14 h]; Unskilled Labor [52.27 h]; Equipment Opreator [39.2 h]; Excavator-Poclain [26.14 h]; Dump Truck [13.07 h]; Single Catch basin - ST [6 nr] |
| RHD4CZ3C083ST7200 | PC Blinding, Installation and Pipe connection for Single Catch Basin - (RD-C-8 /3)-Z3-C083-ST | 2026-09-13 → 2027-01-21 (+130d) | 2026-09-15 → 2027-01-24 (+131d) |  |  |
| RHD4CZ3C083ST7300 | Rings & C.Slab & Final Backfill for Single Catch Basin - (RD-C-8 /3)-Z3-C083-ST | 2026-09-16 → 2027-01-25 (+131d) | 2026-09-19 → 2027-01-27 (+130d) |  | resources Skilled labor [32.67 h]; Unskilled Labor [65.34 h]; Equipment Opreator [39.21 h]; Boom Truck [6.53 h]; Bobcat [32.67 h]; Single Catch basin - ST [8.4 nr] → Skilled labor [32.67 h]; Unskilled Labor [65.34 h]; Equipment Opreator [39.2 h]; Boom Truck [6.53 h]; Bobcat [32.67 h]; Single Catch basin - ST [8.4 nr] |
| RHD4CZ3C083ST7400 | Steel Cover for Single Catch Basin - (RD-C-8 /3)-Z3-C083-ST | 2026-10-13 → 2027-03-27 (+165d) | 2026-10-15 → 2027-03-29 (+165d) |  |  |
| RHD4CZ3C083ST7500 | Finishing and Insulation works for Single Catch Basin - (RD-C-8 /3)-Z3-C083-ST | 2026-10-19 → 2027-04-01 (+164d) | 2026-10-24 → 2027-04-06 (+164d) |  |  |
| 5274 | **RHD4-02-002-C083-(ST)-Double Catch Basin Works** | 2026-09-20 → 2027-01-28 (+130d) | 2026-10-01 → 2027-02-08 (+130d) |  |  |
| RHD4CZ3C083ST8100 | Excavation works for Double Catch Basin - (RD-C-8 /3)-Z3-C083-ST | 2026-09-20 → 2027-01-28 (+130d) | 2026-09-21 → 2027-01-30 (+131d) |  |  |
| RHD4CZ3C083ST8200 | PC Blinding, Installation and Pipe connection for Double Catch Basin - (RD-C-8 /3)-Z3-C083-ST | 2026-09-22 → 2027-01-31 (+131d) | 2026-09-24 → 2027-02-01 (+130d) |  |  |
| RHD4CZ3C083ST8300 | Rings & C.Slab & Final Backfillfor Double Catch Basin - (RD-C-8 /3)-Z3-C083-ST | 2026-09-26 → 2027-02-02 (+129d) | 2026-09-27 → 2027-02-03 (+129d) |  |  |
| RHD4CZ3C083ST8400 | Steel Cover for Double Catch Basin - (RD-C-8 /3)-Z3-C083-ST | 2026-09-28 → 2027-02-04 (+129d) | 2026-09-29 → 2027-02-06 (+130d) |  |  |
| RHD4CZ3C083ST8500 | Finishing and Insulation works for Double Catch Basin - (RD-C-8 /3)-Z3-C083-ST | 2026-09-30 → 2027-02-07 (+130d) | 2026-10-01 → 2027-02-08 (+130d) |  |  |
| 1551 | **RHD4-02-002-Z3-C083-Potable Network - PT** | 2026-10-19 → 2027-04-01 (+164d) | 2026-12-27 → 2027-06-14 (+169d) |  |  |
| 1555 | **RHD4-02-002-C083-(PT)-HDPE Pipes - 400 mm diameter** | 2026-10-19 → 2027-04-01 (+164d) | 2026-11-21 → 2027-05-04 (+164d) |  |  |
| RHD4CZ3C083PT1103 | Excavation works for HDPE Pipline 400 mm - (RD-C-8 /3)-Z3-C083-PT | 2026-10-19 → 2027-04-01 (+164d) | 2026-10-25 → 2027-04-07 (+164d) |  |  |
| RHD4CZ3C083PT1203 | Bedding works for HDPE Pipline 400 mm - (RD-C-8 /3)-Z3-C083-PT | 2026-10-26 → 2027-04-08 (+164d) | 2026-10-31 → 2027-04-13 (+164d) |  | resources Skilled labor [39.97 h]; Unskilled Labor [96.6 h]; Plumber [8.28 h]; Equipment Opreator [88.21 h]; Excavator-Poclain [39.97 h]; Boom Truck [8.28 h]; Dump Truck [39.97 h]; HDPE (400mm Diameter) - PT - Depth: less than 1.5m [54.01 m]; HDPE (400mm Diameter) - PT - Depth: 1.51m - 2.5m [8.24 m] → Skilled labor [40 h]; Unskilled Labor [96.6 h]; Plumber [8.28 h]; Equipment Opreator [88.21 h]; Excavator-Poclain [40 h]; Boom Truck [8.28 h]; Dump Truck [40 h]; HDPE (400mm Diameter) - PT - Depth: less than 1.5m [54.01 m]; HDPE (400mm Diameter) - PT - Depth: 1.51m - 2.5m [8.24 m] |
| RHD4CZ3C083PT1303 | Installing for HDPE Pipline 400 mm - (RD-C-8 /3)-Z3-C083-PT | 2026-11-01 → 2027-04-14 (+164d) | 2026-11-09 → 2027-04-22 (+164d) |  |  |
| RHD4CZ3C083PT1403 | Primary Test for HDPE Pipline 400 mm - (RD-C-8 /3)-Z3-C083-PT | 2026-11-10 → 2027-04-24 (+165d) | 2026-11-14 → 2027-04-27 (+164d) |  |  |
| RHD4CZ3C083PT1503 | Backfilling and warning tape works for HDPE Pipline 400 mm - (RD-C-8 /3)-Z3-C083-PT | 2026-11-15 → 2027-04-28 (+164d) | 2026-11-21 → 2027-05-04 (+164d) |  |  |
| 1563 | **RHD4-02-002-C083-(PT)-Air Valves** | 2026-11-22 → 2027-05-05 (+164d) | 2026-11-25 → 2027-05-09 (+165d) |  |  |
| RHD4CZ3C083PT3103 | Installation for Air Valves for Potable Water Network - (RD-C-8 /3)-Z3-C083-PT | 2026-11-22 → 2027-05-05 (+164d) | 2026-11-23 → 2027-05-06 (+164d) |  |  |
| RHD4CZ3C083PT3203 | Stem and Service box for Air Valves for Potable Water Network - (RD-C-8 /3)-Z3-C083-PT | 2026-11-24 → 2027-05-08 (+165d) | 2026-11-25 → 2027-05-09 (+165d) |  |  |
| 1564 | **RHD4-02-002-C083-(PT)-Fire Hydrant** | 2026-11-26 → 2027-05-10 (+165d) | 2026-12-13 → 2027-05-31 (+169d) |  |  |
| RHD4CZ3C083PT4100 | Excavation and Bedding and Pipe Installation for Fire Hydrant - (RD-C-8 /3)-Z3-C083-PT | 2026-11-26 → 2027-05-10 (+165d) | 2026-11-30 → 2027-05-13 (+164d) |  |  |
| RHD4CZ3C083PT4200 | Valve Installation for Fire Hydrant - (RD-C-8 /3)-Z3-C083-PT | 2026-12-01 → 2027-05-19 (+169d) | 2026-12-03 → 2027-05-22 (+170d) |  |  |
| RHD4CZ3C083PT4300 | Stem for Fire Hydrant - (RD-C-8 /3)-Z3-C083-PT | 2026-12-05 → 2027-05-23 (+169d) | 2026-12-07 → 2027-05-25 (+169d) |  |  |
| RHD4CZ3C083PT4400 | Fire Installation for Fire Hydrant - (RD-C-8 /3)-Z3-C083-PT | 2026-12-08 → 2027-05-26 (+169d) | 2026-12-10 → 2027-05-29 (+170d) |  |  |
| RHD4CZ3C083PT4500 | Protection Barriers for Fire Hydrant - (RD-C-8 /3)-Z3-C083-PT | 2026-12-12 → 2027-05-30 (+169d) | 2026-12-13 → 2027-05-31 (+169d) |  |  |
| 1749 | **RHD4-02-002-C083-(PT)-Wash out Valve Chambers** | 2026-12-14 → 2027-06-01 (+169d) | 2026-12-22 → 2027-06-09 (+169d) |  |  |
| RHD4CZ3C083PT2101 | Excavation and Bedding for Wash out Valve Chambers for Potable Water Network - (RD-C-8 /3)-Z3-C083-PT | 2026-12-14 → 2027-06-01 (+169d) | 2026-12-15 → 2027-06-02 (+169d) |  |  |
| RHD4CZ3C083PT2201 | PC works for Wash out Valve Chambers for Potable Water Network - (RD-C-8 /3)-Z3-C083-PT | 2026-12-16 → 2027-06-03 (+169d) | 2026-12-17 → 2027-06-05 (+170d) |  |  |
| RHD4CZ3C083PT2301 | Installation for Wash out Valve Chambers for Potable Water Network - (RD-C-8 /3)-Z3-C083-PT | 2026-12-19 → 2027-06-06 (+169d) | 2026-12-20 → 2027-06-07 (+169d) |  |  |
| RHD4CZ3C083PT2401 | Backfilling works for Wash out Valve Chambers for Potable Water Network - (RD-C-8 /3)-Z3-C083-PT | 2026-12-21 → 2027-06-08 (+169d) | 2026-12-22 → 2027-06-09 (+169d) |  |  |
| 1750 | **RHD4-02-002-C083-(PT)-Wash out Valves** | 2026-12-23 → 2027-06-10 (+169d) | 2026-12-27 → 2027-06-14 (+169d) |  |  |
| RHD4CZ3C083PT3102 | Installation for Wash out Valves for Potable Water Network - (RD-C-8 /3)-Z3-C083-PT | 2026-12-23 → 2027-06-10 (+169d) | 2026-12-24 → 2027-06-12 (+170d) |  |  |
| RHD4CZ3C083PT3202 | Stem and Service box for Wash out Valves for Potable Water Network - (RD-C-8 /3)-Z3-C083-PT | 2026-12-26 → 2027-06-13 (+169d) | 2026-12-27 → 2027-06-14 (+169d) |  |  |
| 1562 | **RHD4-02-002-C083-(PT)-Air Valve Chambers** | 2026-10-26 → 2027-04-08 (+164d) | 2026-11-03 → 2027-04-17 (+165d) |  |  |
| RHD4CZ3C083PT2102 | Excavation and Bedding for Air Valve Chambers for Potable Water Network - (RD-C-8 /3)-Z3-C083-PT | 2026-10-26 → 2027-04-08 (+164d) | 2026-10-27 → 2027-04-10 (+165d) |  |  |
| RHD4CZ3C083PT2202 | PC works for Air Valve Chambers for Potable Water Network - (RD-C-8 /3)-Z3-C083-PT | 2026-10-28 → 2027-04-11 (+165d) | 2026-10-29 → 2027-04-12 (+165d) |  |  |
| RHD4CZ3C083PT2302 | Installation for Air Valve Chambers for Potable Water Network - (RD-C-8 /3)-Z3-C083-PT | 2026-10-31 → 2027-04-13 (+164d) | 2026-11-01 → 2027-04-14 (+164d) |  |  |
| RHD4CZ3C083PT2402 | Backfilling works for Air Valve Chambers for Potable Water Network - (RD-C-8 /3)-Z3-C083-PT | 2026-11-02 → 2027-04-15 (+164d) | 2026-11-03 → 2027-04-17 (+165d) |  |  |
| 1566 | **RHD4-02-002-Z3-C083-Irrigation Network - IRR** | 2026-12-28 → 2027-06-15 (+169d) | 2027-01-23 → 2027-07-15 (+173d) |  |  |
| 1571 | **RHD4-02-002-C083-(IRR)-HDPE Pipes - 315 mm diameter** | 2026-12-28 → 2027-06-15 (+169d) | 2027-01-23 → 2027-07-15 (+173d) |  |  |
| RHD4CZ3C083IRR1104 | Excavation works for HDPE Pipline 315 mm - (RD-C-8 /3)-Z3-C083-IRR | 2026-12-28 → 2027-06-15 (+169d) | 2027-01-02 → 2027-06-20 (+169d) |  |  |
| RHD4CZ3C083IRR1204 | Bedding works for HDPE Pipline 315 mm - (RD-C-8 /3)-Z3-C083-IRR | 2027-01-03 → 2027-06-21 (+169d) | 2027-01-10 → 2027-06-28 (+169d) |  |  |
| RHD4CZ3C083IRR1304 | Installing for HDPE Pipline 315 mm - (RD-C-8 /3)-Z3-C083-IRR | 2027-01-11 → 2027-06-29 (+169d) | 2027-01-13 → 2027-07-06 (+174d) | 3d → 7d | resources Unskilled Labor [170.43 h]; Plumber [85.16 h]; Equipment Opreator [85.16 h]; Boom Truck [85.16 h]; HDPE (315mm Diameter) - TSE - Depth: less than 1.5m [474.18 m]; HDPE (315mm Diameter) - TSE - Depth: more than 1.51m [48 m] → Unskilled Labor [170.4 h]; Plumber [85.16 h]; Equipment Opreator [85.16 h]; Boom Truck [85.16 h]; HDPE (315mm Diameter) - TSE - Depth: less than 1.5m [474.18 m]; HDPE (315mm Diameter) - TSE - Depth: more than 1.51m [48 m] |
| RHD4CZ3C083IRR1404 | Primary Test for HDPE Pipline 315 mm - (RD-C-8 /3)-Z3-C083-IRR | 2027-01-14 → 2027-07-07 (+174d) | 2027-01-17 → 2027-07-10 (+174d) |  |  |
| RHD4CZ3C083IRR1504 | Backfilling and warning tape works for HDPE Pipline 315 mm - (RD-C-8 /3)-Z3-C083-IRR | 2027-01-18 → 2027-07-11 (+174d) | 2027-01-23 → 2027-07-15 (+173d) |  |  |
| 1607 | **RHD4-02-002-Z3-C083-Low Voltage Network - LV** | 2027-01-24 → 2027-07-17 (+174d) | 2027-02-10 → 2027-08-03 (+174d) |  |  |
| 1610 | **RHD4-02-002-C083-(LV)-Low Voltage cables** | 2027-01-24 → 2027-07-17 (+174d) | 2027-02-10 → 2027-08-03 (+174d) |  |  |

| ID | Task | Start | Finish | Complete | Other |
| --- | --- | --- | --- | --- | --- |
| RHD4CZ3C083LV3100 | Excavation for Low Voltage Cables for Low Voltage Network - (RD-C-8 /3)-Z3-C083-LV | 2027-01-24 → 2027-07-17 (+174d) | 2027-01-28 → 2027-07-21 (+174d) |  |  |
| RHD4CZ3C083LV3200 | Cable Laying of Low Voltage Cables for Low Voltage Network - (RD-C-8 /3)-Z3-C083-LV | 2027-01-30 → 2027-07-22 (+173d) | 2027-02-02 → 2027-07-26 (+174d) |  | resources Skilled labor [40.84 h]; Unskilled Labor [163.46 h]; Electrician [81.79 h]; Equipment Opreator [122.63 h]; Boom Truck [40.84 h]; Cable Laying Machine [81.79 h]; Cable, Copper 3x10mm2/ CU/XLPE/SWA/PVC [675.54 m] → Skilled labor [40.8 h]; Unskilled Labor [163.46 h]; Electrician [81.79 h]; Equipment Opreator [122.63 h]; Boom Truck [40.8 h]; Cable Laying Machine [81.79 h]; Cable, Copper 3x10mm2/ CU/XLPE/SWA/PVC [675.54 m] |
| RHD4CZ3C083LV3300 | Warning tape and Backfill for Low Voltage Cables for Low Voltage Network - (RD-C-8 /3)-Z3-C083-LV | 2027-02-03 → 2027-07-27 (+174d) | 2027-02-07 → 2027-07-31 (+174d) |  | resources Skilled labor [40.84 h]; Unskilled Labor [163.46 h]; Electrician [81.79 h]; Equipment Opreator [40.84 h]; Boom Truck [40.84 h]; Cable, Copper 3x10mm2/ CU/XLPE/SWA/PVC [168.88 m] → Skilled labor [40.8 h]; Unskilled Labor [163.46 h]; Electrician [81.79 h]; Equipment Opreator [40.8 h]; Boom Truck [40.8 h]; Cable, Copper 3x10mm2/ CU/XLPE/SWA/PVC [168.88 m] |
| RHD4CZ3C083LV3400 | Testing of Low Voltage Cables for Low Voltage Network - (RD-C-8 /3)-Z3-C083-LV | 2027-02-08 → 2027-08-01 (+174d) | 2027-02-10 → 2027-08-03 (+174d) |  |  |
| 1613 | **RHD4-02-002-Z3-C083-Street Lighting Network - SL** | 2026-09-09 → 2027-01-18 (+131d) | 2027-04-03 → 2027-09-19 (+169d) |  |  |
| 1614 | **RHD4-02-002-C083-(SL)-Street Lighting duct banks** | 2026-09-09 → 2027-01-18 (+131d) | 2026-09-17 → 2027-01-30 (+135d) |  |  |
| RHD4CZ3C083SL2100 | Excavation of Duct Banks for Street Lighting Network - (RD-C-8 /3)-Z3-C083-SL | 2026-09-09 → 2027-01-18 (+131d) | 2026-09-10 → 2027-01-19 (+131d) |  |  |
| RHD4CZ3C083SL2200 | Installation of Duct Banks for Street Lighting Network - (RD-C-8 /3)-Z3-C083-SL | 2026-09-12 → 2027-01-24 (+134d) | 2026-09-13 → 2027-01-25 (+134d) |  | resources Carpenter [1.42 h]; Skilled labor [13.61 h]; Unskilled Labor [13.61 h]; Steel Fixer [1.42 h]; Road Crossing Duct for Street Lighting cables UPVC (4x?110mm) [1.25 m] → Carpenter [1.42 h]; Skilled labor [13.6 h]; Unskilled Labor [13.6 h]; Steel Fixer [1.42 h]; Road Crossing Duct for Street Lighting cables UPVC (4x?110mm) [1.25 m] |
| RHD4CZ3C083SL2300 | Pouring of Duct Banks for Street Lighting Network - (RD-C-8 /3)-Z3-C083-SL | 2026-09-14 → 2027-01-26 (+134d) | 2026-09-15 → 2027-01-27 (+134d) |  |  |
| RHD4CZ3C083SL2400 | Backfilling of Duct Banks for Street Lighting Network - (RD-C-8 /3)-Z3-C083-SL | 2026-09-16 → 2027-01-28 (+134d) | 2026-09-17 → 2027-01-30 (+135d) |  |  |
| 1615 | **RHD4-02-002-C083-(SL)-Street Lighting Drawpit** | 2027-02-11 → 2027-08-04 (+174d) | 2027-02-15 → 2027-08-08 (+174d) |  |  |
| RHD4CZ3C083SL5100 | Excavation of Drawpit size 600x600x900mm for Street Lighting Network - (RD-C-8 /3)-Z3-C083-SL | 2027-02-11 → 2027-08-04 (+174d) | 2027-02-13 → 2027-08-05 (+173d) |  | resources Skilled labor [0.87 h]; Unskilled Labor [0.87 h]; Equipment Opreator [0.76 h]; Excavator-Poclain [0.33 h]; Dump Truck [0.33 h]; Drawpit with medium duty steel cover, size600x600x900mm, [0.15 Unit] → Skilled labor [0.87 h]; Unskilled Labor [0.87 h]; Equipment Opreator [0.8 h]; Excavator-Poclain [0.33 h]; Dump Truck [0.33 h]; Drawpit with medium duty steel cover, size600x600x900mm, [0.15 Unit] |
| RHD4CZ3C083SL5200 | Installation of Drawpit size 600x600x900mm for Street Lighting Network - (RD-C-8 /3)-Z3-C083-SL | 2027-02-14 → 2027-08-07 (+174d) | 2027-02-15 → 2027-08-08 (+174d) |  |  |
| 1616 | **RHD4-02-002-C083-(SL)-Street Lighting cables** | 2027-02-13 → 2027-08-05 (+173d) | 2027-03-18 → 2027-09-04 (+170d) |  |  |
| RHD4CZ3C083SL3100 | Excavation for Street Lighting Cables for Street Lighting Network - (RD-C-8 /3)-Z3-C083-SL | 2027-02-13 → 2027-08-05 (+173d) | 2027-02-21 → 2027-08-14 (+174d) |  |  |
| RHD4CZ3C083SL3200 | Cable Laying of Street Lighting Cables for Street Lighting Network - (RD-C-8 /3)-Z3-C083-SL | 2027-02-23 → 2027-08-15 (+173d) | 2027-03-02 → 2027-08-22 (+173d) |  |  |
| RHD4CZ3C083SL3300 | Warning tape and Backfill for Street Lighting Cables for Street Lighting Network - (RD-C-8 /3)-Z3-C083-SL | 2027-03-03 → 2027-08-23 (+173d) | 2027-03-14 → 2027-08-30 (+169d) |  |  |
| RHD4CZ3C083SL3400 | Testing of Street Lighting Cables for Street Lighting Network - (RD-C-8 /3)-Z3-C083-SL | 2027-03-15 → 2027-08-31 (+169d) | 2027-03-18 → 2027-09-04 (+170d) |  |  |
| 1617 | **RHD4-02-002-C083-(SL)-Street Lighting Poles** | 2027-01-30 → 2027-07-22 (+173d) | 2027-04-03 → 2027-09-19 (+169d) |  |  |
| RHD4CZ3C083SL1100 | Excavation for RC Base for Lighting Poles for Street Lighting Network - (RD-C-8 /3)-Z3-C083-SL | 2027-01-30 → 2027-07-22 (+173d) | 2027-02-02 → 2027-07-26 (+174d) |  |  |
| RHD4CZ3C083SL1200 | Installation for RC Base for Lighting Poles for Street Lighting Network - (RD-C-8 /3)-Z3-C083-SL | 2027-02-03 → 2027-07-27 (+174d) | 2027-02-07 → 2027-07-31 (+174d) |  |  |
| RHD4CZ3C083SL1300 | Backfill for RC Base for Lighting Poles for Street Lighting Network - (RD-C-8 /3)-Z3-C083-SL | 2027-02-08 → 2027-08-01 (+174d) | 2027-02-11 → 2027-08-04 (+174d) |  |  |
| RHD4CZ3C083SL1400 | Installation for Lighting Poles for Street Lighting Network - (RD-C-8 /3)-Z3-C083-SL | 2027-03-20 → 2027-09-05 (+169d) | 2027-03-25 → 2027-09-11 (+170d) |  |  |
| RHD4CZ3C083SL1500 | Luminaire Installation for Lighting Poles for Street Lighting Network - (RD-C-8 /3)-Z3-C083-SL | 2027-03-27 → 2027-09-12 (+169d) | 2027-04-03 → 2027-09-19 (+169d) |  | resources Unskilled Labor [133.62 h]; Electrician [66.76 h]; Equipment Opreator [24.72 h]; Boom Truck [26.68 h]; Street Lighting( LED) Luminaire of Output ?18553 lumen [78 Unit]; Street Lighting( LED) Luminaire of Output ?10898 lumen [14 Unit] → Unskilled Labor [133.6 h]; Electrician [66.76 h]; Equipment Opreator [24.72 h]; Boom Truck [26.68 h]; Street Lighting( LED) Luminaire of Output ?18553 lumen [78 Unit]; Street Lighting( LED) Luminaire of Output ?10898 lumen [14 Unit] |
| 1618 | **RHD4-02-002-C083-(SL)-Street Lighting Feeder Pillars** | 2027-03-15 → 2027-08-31 (+169d) | 2027-03-28 → 2027-09-13 (+169d) |  |  |
| RHD4CZ3C083SL4100 | Leveling for Distribution Pillars for Street Lighting Network - (RD-C-8 /3)-Z3-C083-SL | 2027-03-15 → 2027-08-31 (+169d) | 2027-03-16 → 2027-09-01 (+169d) |  |  |
| RHD4CZ3C083SL4200 | Lean Concrete for Distribution Pillars for Street Lighting Network - (RD-C-8 /3)-Z3-C083-SL | 2027-03-17 → 2027-09-02 (+169d) | 2027-03-18 → 2027-09-04 (+170d) |  |  |
| RHD4CZ3C083SL4300 | Installation of Distribution Pillars for Street Lighting Network - (RD-C-8 /3)-Z3-C083-SL | 2027-03-27 → 2027-09-12 (+169d) | 2027-03-28 → 2027-09-13 (+169d) |  |  |
| 1619 | **RHD4-02-002-C083-(SL)-Street Lighting Earthing System** | 2027-03-29 → 2027-09-14 (+169d) | 2027-03-30 → 2027-09-15 (+169d) |  |  |
| RHD4CZ3C083SL6100 | Installation of Earthing for Lighting Poles and Fedder Pillers for Street Lighting Network - (RD-C-8 /3)-Z3-C083-SL | 2027-03-29 → 2027-09-14 (+169d) | 2027-03-30 → 2027-09-15 (+169d) |  | resources Skilled labor [0.76 h]; Unskilled Labor [0.76 h]; Equipment Opreator [1.42 h]; Excavator-Poclain [0.76 h]; Dump Truck [0.76 h]; Including lighting poles circuits - ER [1 Unit] → Skilled labor [0.8 h]; Unskilled Labor [0.8 h]; Equipment Opreator [1.42 h]; Excavator-Poclain [0.8 h]; Dump Truck [0.8 h]; Including lighting poles circuits - ER [1 Unit] |
| 1625 | **RHD4-02-002-Z3-C083-Telecommunications Network - TC** | 2027-03-31 → 2027-09-16 (+169d) | 2027-05-05 → 2027-10-23 (+171d) |  |  |
| 1626 | **RHD4-02-002-C083-(TC)-Telecommunications Ducts** | 2027-03-31 → 2027-09-16 (+169d) | 2027-05-05 → 2027-10-23 (+171d) |  |  |
| RHD4CZ3C083TC2100 | Excavation of HDPE Ducts for Telecom Network - (RD-C-8 /3)-Z3-C083-TC | 2027-03-31 → 2027-09-16 (+169d) | 2027-04-10 → 2027-09-27 (+170d) |  | resources Skilled labor [87.99 h]; Unskilled Labor [87.99 h]; Equipment Opreator [175.99 h]; Excavator-Poclain [87.99 h]; Dump Truck [87.99 h]; (6*50mm) HDPE ducts -TC [123.32 m]; (6*50mm+2*32mm) HDPE ducts -TC [57.16 m]; (6*50mm+4*32mm) HDPE ducts -TC [46.32 m]; (2*32mm) HDPE ducts -TC [20.61 m] → Skilled labor [88 h]; Unskilled Labor [88 h]; Equipment Opreator [176 h]; Excavator-Poclain [88 h]; Dump Truck [88 h]; (6*50mm) HDPE ducts -TC [123.32 m]; (6*50mm+2*32mm) HDPE ducts -TC [57.16 m]; (6*50mm+4*32mm) HDPE ducts -TC [46.32 m]; (2*32mm) HDPE ducts -TC [20.61 m] |
| RHD4CZ3C083TC2200 | Installation of HDPE Ducts for Telecom Network - (RD-C-8 /3)-Z3-C083-TC | 2027-04-11 → 2027-09-28 (+170d) | 2027-04-25 → 2027-10-12 (+170d) |  | resources Carpenter [13.18 h]; Skilled labor [131.99 h]; Unskilled Labor [131.99 h]; Steel Fixer [13.18 h]; (6*50mm) HDPE ducts -TC [400.79 m]; (6*50mm+2*32mm) HDPE ducts -TC [185.77 m]; (6*50mm+4*32mm) HDPE ducts -TC [150.54 m]; (2*32mm) HDPE ducts -TC [66.98 m] → Carpenter [13.18 h]; Skilled labor [132 h]; Unskilled Labor [132 h]; Steel Fixer [13.18 h]; (6*50mm) HDPE ducts -TC [400.79 m]; (6*50mm+2*32mm) HDPE ducts -TC [185.77 m]; (6*50mm+4*32mm) HDPE ducts -TC [150.54 m]; (2*32mm) HDPE ducts -TC [66.98 m] |
| RHD4CZ3C083TC2400 | Backfilling of HDPE Ducts for Telecom Network - (RD-C-8 /3)-Z3-C083-TC | 2027-04-26 → 2027-10-13 (+170d) | 2027-05-05 → 2027-10-23 (+171d) |  | resources Skilled labor [87.99 h]; Unskilled Labor [87.99 h]; Equipment Opreator [35.18 h]; Excavator-Poclain [35.18 h]; (6*50mm) HDPE ducts -TC [92.49 m]; (6*50mm+2*32mm) HDPE ducts -TC [42.87 m]; (6*50mm+4*32mm) HDPE ducts -TC [34.74 m]; (2*32mm) HDPE ducts -TC [15.46 m] → Skilled labor [88 h]; Unskilled Labor [88 h]; Equipment Opreator [35.2 h]; Excavator-Poclain [35.2 h]; (6*50mm) HDPE ducts -TC [92.49 m]; (6*50mm+2*32mm) HDPE ducts -TC [42.87 m]; (6*50mm+4*32mm) HDPE ducts -TC [34.74 m]; (2*32mm) HDPE ducts -TC [15.46 m] |
| 1627 | **RHD4-02-002-C083-(TC)-Telecommunications Manholes** | 2027-04-11 → 2027-09-28 (+170d) | 2027-04-17 → 2027-10-04 (+170d) |  |  |
| RHD4CZ3C083TC5100 | Excavation for Manholes for Telecom Network - (RD-C-8 /3)-Z3-C083-TC | 2027-04-11 → 2027-09-28 (+170d) | 2027-04-13 → 2027-09-30 (+170d) |  |  |
| RHD4CZ3C083TC5200 | Installation of Manholes for Telecom Network - (RD-C-8 /3)-Z3-C083-TC | 2027-04-14 → 2027-10-02 (+171d) | 2027-04-17 → 2027-10-04 (+170d) |  |  |
| 1629 | **RHD4-02-002-Z3-C083-Information and Communication Technologies - ICT** | 2027-03-31 → 2027-09-16 (+169d) | 2027-05-09 → 2027-10-26 (+170d) |  |  |
| 1630 | **RHD4-02-002-C083-(ICT)-Information and Communication Technologies Ducts** | 2027-03-31 → 2027-09-16 (+169d) | 2027-05-09 → 2027-10-26 (+170d) |  |  |
| RHD4CZ3C083ICT2100 | Excavation of HDPE Ducts for ICT Network - (RD-C-8 /3)-Z3-C083-ICT | 2027-03-31 → 2027-09-16 (+169d) | 2027-04-11 → 2027-09-28 (+170d) |  |  |
| RHD4CZ3C083ICT2200 | Installation of HDPE Ducts for ICT Network - (RD-C-8 /3)-Z3-C083-ICT | 2027-04-12 → 2027-09-29 (+170d) | 2027-04-27 → 2027-10-14 (+170d) |  |  |
| RHD4CZ3C083ICT2400 | Backfilling of HDPE Ducts for ICT Network - (RD-C-8 /3)-Z3-C083-ICT | 2027-04-28 → 2027-10-16 (+171d) | 2027-05-09 → 2027-10-26 (+170d) |  |  |
| 1631 | **RHD4-02-002-C083-(ICT)-Information and Communication Technologies Manholes** | 2027-04-12 → 2027-09-29 (+170d) | 2027-04-18 → 2027-10-05 (+170d) |  |  |
| RHD4CZ3C083ICT5100 | Excavation for Manholes for ICT Network - (RD-C-8 /3)-Z3-C083-ICT | 2027-04-12 → 2027-09-29 (+170d) | 2027-04-14 → 2027-10-02 (+171d) |  |  |
| RHD4CZ3C083ICT5200 | Installation of Manholes for ICT Network - (RD-C-8 /3)-Z3-C083-ICT | 2027-04-15 → 2027-10-03 (+171d) | 2027-04-18 → 2027-10-05 (+170d) |  |  |
| 1633 | **RHD4-02-002-Z3-C083-Security Network - CCTV** | 2027-05-10 → 2027-10-27 (+170d) | 2027-06-27 → 2027-12-09 (+165d) |  |  |
| 1634 | **RHD4-02-002-C083-(CCTV)-Civil Works** | 2027-05-10 → 2027-10-27 (+170d) | 2027-05-25 → 2027-11-07 (+166d) |  |  |
| RHD4CZ3C083CCTV2100 | Civil Works for Security Network - (RD-C-8 /3)-Z3-C083-CCTV | 2027-05-10 → 2027-10-27 (+170d) | 2027-05-25 → 2027-11-07 (+166d) |  |  |
| 1635 | **RHD4-02-002-C083-(CCTV)-CCTV Poles** | 2027-05-26 → 2027-11-08 (+166d) | 2027-06-06 → 2027-11-18 (+165d) |  |  |
| RHD4CZ3C083CCTV1100 | Excavation for RC Base for CCTV Poles for Security Network - (RD-C-8 /3)-Z3-C083-CCTV | 2027-05-26 → 2027-11-08 (+166d) | 2027-05-27 → 2027-11-09 (+166d) |  |  |
| RHD4CZ3C083CCTV1200 | Installation for RC Base for CCTV Poles for Security Network - (RD-C-8 /3)-Z3-C083-CCTV | 2027-05-29 → 2027-11-10 (+165d) | 2027-05-30 → 2027-11-11 (+165d) |  |  |
| RHD4CZ3C083CCTV1300 | Backfill for RC Base for CCTV Poles for Security Network - (RD-C-8 /3)-Z3-C083-CCTV | 2027-05-31 → 2027-11-13 (+166d) | 2027-06-01 → 2027-11-14 (+166d) |  |  |
| RHD4CZ3C083CCTV1400 | Installation for CCTV Poles for Security Network - (RD-C-8 /3)-Z3-C083-CCTV | 2027-06-02 → 2027-11-15 (+166d) | 2027-06-03 → 2027-11-16 (+166d) |  |  |
| RHD4CZ3C083CCTV1500 | Protection post Installation for CCTV Poles for Security Network - (RD-C-8 /3)-Z3-C083-CCTV | 2027-06-05 → 2027-11-17 (+165d) | 2027-06-06 → 2027-11-18 (+165d) |  |  |
| 1636 | **RHD4-02-002-C083-(CCTV)-Camera** | 2027-06-07 → 2027-11-20 (+166d) | 2027-06-08 → 2027-11-21 (+166d) |  |  |
| RHD4CZ3C083CCTV3100 | Installation for Cameras for Security Network - (RD-C-8 /3)-Z3-C083-CCTV | 2027-06-07 → 2027-11-20 (+166d) | 2027-06-08 → 2027-11-21 (+166d) |  |  |
| 1637 | **RHD4-02-002-C083-(CCTV)-Power and Infrastructure** | 2027-06-05 → 2027-11-17 (+165d) | 2027-06-08 → 2027-11-21 (+166d) |  |  |
| RHD4CZ3C083CCTV4100 | Installation of Power outlet, UPS and midspan for PTZ Camerafor Cameras for Security Network - (RD-C-8 /3)-Z3-C083-CCTV | 2027-06-05 → 2027-11-17 (+165d) | 2027-06-06 → 2027-11-18 (+165d) |  |  |
| RHD4CZ3C083CCTV4200 | Short Range Wireless PoP wireless Bridgefor CCTV Poles for Security Network - (RD-C-8 /3)-Z3-C083-CCTV | 2027-06-07 → 2027-11-20 (+166d) | 2027-06-08 → 2027-11-21 (+166d) |  |  |
| 1639 | **RHD4-02-002-C083-(CCTV)-CCTV Panels and Components** | 2027-06-09 → 2027-11-22 (+166d) | 2027-06-27 → 2027-12-09 (+165d) |  |  |
| RHD4CZ3C083CCTV6100 | Installation for CCTV Panels for Security Network - (RD-C-8 /3)-Z3-C083-CCTV | 2027-06-09 → 2027-11-22 (+166d) | 2027-06-27 → 2027-12-09 (+165d) |  |  |
| 3 | **Tunnels** |  | 2027-05-29 → 2027-11-10 (+165d) |  |  |
| 4 | **Tunnel 01** |  | 2027-05-29 → 2027-11-10 (+165d) |  |  |
| 17 | **RHD4-02-002 - Tunnel 1 - Stage 02** |  | 2027-05-29 → 2027-11-10 (+165d) |  |  |
| 18 | **RHD4-02-002 - Tunnel 1 - STG 2 - Concrete Works** |  | 2026-10-13 → 2027-02-12 (+122d) |  |  |
| 19 | **RHD4-02-002 - Tunnel 1 - Concrete Works - PC Foundation** |  | 2026-04-27 → 2026-06-08 (+42d) |  |  |
| RHD4CTUN1Z5STG21000 | PC Footing Shuttering Works -TUN1-Z5-STG2-Concrete Works-PC Foundation | 2026-04-19 A | 2026-04-20 → 2026-05-24 A (+34d) | 0% → 100% |  |
| RHD4CTUN1Z5STG21010 | Casting of 100mm Blinding Concrete Under Foundation-TUN1-Z5-STG2-Concrete Works-PC Foundation | 2026-04-21 A | 2026-04-22 → 2026-05-25 A (+33d) | 0% → 100% |  |
| RHD4CTUN1Z5STG21020 | Applying 2 layers of waterproofing bitumenous membrane 4mm below footings-TUN1-Z5-STG2-Concrete Works-PC Foundation | 2026-04-23 A | 2026-04-25 → 2026-06-06 A (+42d) | 0% → 100% |  |

| ID | Task | Start | Finish | Complete | Other |
| --- | --- | --- | --- | --- | --- |
| RHD4CTUN1Z5STG21030 | Casting of 50mm Screed for Membrane Protection-TUN1-Z5-STG2-Concrete Works-PC Foundation | 2026-04-26 A | 2026-04-27 → 2026-06-08 A (+42d) | 0% → 100% | resources Supply and cast in place screed concrete 50 mm thickness screed concrete for protecting waterproofing under the foundation for (Sewer and Storm Pump station) and (tunnels) [71.32 m2]; Mason [1046.02 h]; Unskilled Labor [1743.44 h]; Equipment Opreator [131.01 h]; Bobcat [27.23 h]; Concrete Mixer Truck [136.46 h] → Supply and cast in place screed concrete 50 mm thickness screed concrete for protecting waterproofing under the foundation for (Sewer and Storm Pump station) and (tunnels) [71.32 m2]; Mason [1046.02 h]; Unskilled Labor [1743.44 h]; Equipment Opreator [131.01 h]; Bobcat [27.2 h]; Concrete Mixer Truck [136.46 h] |
| 20 | **RHD4-02-002 - Tunnel 1 - Concrete Works - RC Foundation** |  | 2026-06-03 → 2026-07-20 (+47d) |  |  |
| RHD4CTUN1Z5STG21040 | Shuttering Works for RC Footing-TUN1-Z5-STG2-Concrete Works-RC Foundation(Completed) | 2026-04-28 A | 2026-06-01 → 2026-07-14 A (+43d) | 0% → 100% | resources Supply and cast in place reinforced concrete with fc'=50 Mpa for the sub- structures for (tunnels) for Footings [221.06 m3]; Carpenter [1599.9 h]; Skilled labor [76.23 h]; Unskilled Labor [228.59 h]; Equipment Opreator [4.79 h]; Bobcat [5.99 h] → Supply and cast in place reinforced concrete with fc'=50 Mpa for the sub- structures for (tunnels) for Footings [221.06 m3]; Carpenter [1599.9 h]; Skilled labor [76.23 h]; Unskilled Labor [228.59 h]; Equipment Opreator [4.8 h]; Bobcat [5.99 h] |
| RHD4CTUN1Z5STG21050 | Steel fixing Works for RC Footing -TUN1-Z5-STG2-Concrete Works-RC Foundation(Completed) | 2026-04-28 A | 2026-06-03 → 2026-07-12 A (+39d) | 0% → 100% |  |
| RHD4CTUN1Z5STG21060 | casting of reinforced concrete for RC Footing -TUN1-Z5-STG2-Concrete Works-RC Foundation(Completed) | 2026-04-28 A | 2026-05-24 → 2026-07-15 A (+52d) | 0% → 100% |  |
| RHD4CTUN1Z5STG21070 | De-shuttering and Curing Works for RC Footing -TUN1-Z5-STG2-Concrete Works-RC Foundation(Completed) | 2026-04-28 A | 2026-05-22 → 2026-07-20 A (+59d) | 0% → 100% |  |
| 21 | **RHD4-02-002 - Tunnel 1 - Concrete Works - Under Ground Walls** |  | 2026-07-28 → 2026-12-31 (+156d) |  |  |
| 22 | **RHD4-02-002 - Tunnel 1 - Under Ground Walls - Stage 1 (Up to 3m)** |  | 2026-06-29 → 2026-09-08 (+71d) |  |  |
| RHD4CTUN1Z5STG21080 | shuttering Works of Three Sides for Walls <Stage 01>-TUN1-Z5-STG2-Concrete Works-Under Ground Walls | 2026-06-04 A | 2026-06-09 → 2026-08-09 A (+61d) | 0% → 100% |  |
| RHD4CTUN1Z5STG21090 | Steel fixing Works for Walls <Stage 01>-TUN1-Z5-STG2-Concrete Works-Under Ground Walls | 2026-06-10 A | 2026-06-15 → 2026-08-15 A (+61d) | 0% → 100% |  |
| RHD4CTUN1Z5STG21100 | shuttering Works of the 4th Side for Walls <Stage 01>-TUN1-Z5-STG2-Concrete Works-Under Ground Walls | 2026-06-16 A | 2026-06-20 → 2026-08-19 A (+60d) | 0% → 100% |  |
| RHD4CTUN1Z5STG21110 | casting of reinforced concrete for Walls <Stage 01>-TUN1-Z5-STG2-Concrete Works-Under Ground Walls | 2026-06-21 A | 2026-06-24 → 2026-08-24 A (+61d) | 0% → 100% |  |
| RHD4CTUN1Z5STG21120 | De-shuttering and Curing Works for Walls <Stage 01>-TUN1-Z5-STG2-Concrete Works-Under Ground Walls | 2026-06-25 A | 2026-06-29 → 2026-09-08 A (+71d) | 0% → 100% |  |
| 23 | **RHD4-02-002 - Tunnel 1 - Under Ground Walls - Stage 2 (Up to 6m)** |  | 2026-07-21 → 2026-09-09 (+50d) |  |  |
| RHD4CTUN1Z5STG21130 | shuttering Works of Three Sides for Walls <Stage 02>-TUN1-Z5-STG2-Concrete Works-Under Ground Walls | 2026-06-25 A | 2026-06-30 → 2026-08-09 A (+40d) | 0% → 100% |  |
| RHD4CTUN1Z5STG21140 | Steel fixing Works for Walls <Stage 02>-TUN1-Z5-STG2-Concrete Works-Under Ground Walls | 2026-07-01 A | 2026-07-06 → 2026-08-15 A (+40d) | 0% → 100% |  |
| RHD4CTUN1Z5STG21150 | shuttering Works of the 4th Side for Walls <Stage 02>-TUN1-Z5-STG2-Concrete Works-Under Ground Walls | 2026-07-07 A | 2026-07-12 → 2026-08-20 A (+39d) | 0% → 100% |  |
| RHD4CTUN1Z5STG21160 | casting of reinforced concrete for Walls <Stage 02>-TUN1-Z5-STG2-Concrete Works-Under Ground Walls | 2026-07-13 A | 2026-07-16 → 2026-08-25 A (+40d) | 0% → 100% |  |
| RHD4CTUN1Z5STG21170 | De-shuttering and Curing Works for Walls <Stage 02>-TUN1-Z5-STG2-Concrete Works-Under Ground Walls | 2026-07-17 A | 2026-07-21 → 2026-09-09 A (+50d) | 0% → 100% |  |
| 24 | **RHD4-02-002 - Tunnel 1 - Under Ground Walls - Stage 3 (Up to 9m)** |  | 2026-07-28 → 2026-12-31 (+156d) |  |  |
| RHD4CTUN1Z5STG21180 | shuttering Works of Three Sides for Walls <Stage 03>-TUN1-Z5-STG2-Concrete Works-Under Ground Walls | 2026-06-25 A | 2026-06-30 → 2026-08-09 A (+40d) | 0% → 100% |  |
| RHD4CTUN1Z5STG21190 | Steel fixing Works for Walls <Stage 03>-TUN1-Z5-STG2-Concrete Works-Under Ground Walls | 2026-07-01 A | 2026-07-06 → 2026-09-09 A (+65d) | 0% → 100% |  |
| RHD4CTUN1Z5STG21200 | shuttering Works of the 4th Side for Walls <Stage 03>-TUN1-Z5-STG2-Concrete Works-Under Ground Walls | 2026-07-07 → 2026-09-10 A (+65d) | 2026-07-12 → 2026-09-15 A (+65d) | 0% → 100% |  |
| RHD4CTUN1Z5STG21210 | casting of reinforced concrete for Walls <Stage 03>-TUN1-Z5-STG2-Concrete Works-Under Ground Walls | 2026-07-13 → 2026-09-17 A (+66d) | 2026-07-16 → 2026-09-21 A (+67d) | 0% → 100% |  |
| RHD4CTUN1Z5STG21220 | De-shuttering and Curing Works for Walls <Stage 03>-TUN1-Z5-STG2-Concrete Works-Under Ground Walls | 2026-07-18 → 2026-09-22 A (+66d) | 2026-07-21 → 2026-09-27 A (+68d) | 0% → 100% |  |
| RHD4CTUN1Z5STG21230 | Installation of 2 layers of bitumenous waterproofing membrane<Stage 03>-TUN1-Z5-STG2-Concrete Works-Under Ground Walls | 2026-07-22 → 2026-12-26 (+157d) | 2026-07-26 → 2026-12-29 (+156d) |  |  |
| RHD4CTUN1Z5STG21240 | Installation of Protection board for waterproofing <Stage 03>-TUN1-Z5-STG2-Concrete Works-Under Ground Walls | 2026-07-27 → 2026-12-30 (+156d) | 2026-07-28 → 2026-12-31 (+156d) |  |  |
| 25 | **RHD4-02-002 - Tunnel 1 - Concrete Works - Slab** | 2026-07-29 → 2026-09-01 (+34d) | 2026-09-27 → 2027-01-26 (+121d) |  |  |
| RHD4CTUN1Z5STG21250 | shuttering Works for Beams And Slab-TUN1-Z5-STG2-Concrete Works-Slab | 2026-07-29 → 2026-09-01 A (+34d) | 2026-08-09 → 2026-10-18 A (+70d) | 0% → 100% |  |
| RHD4CTUN1Z5STG21260 | Steel fixing Works for Beams And Slab-TUN1-Z5-STG2-Concrete Works-Slab | 2026-08-10 → 2026-09-15 A (+36d) | 2026-08-23 → 2026-10-27 A (+65d) | 0% → 100% |  |
| RHD4CTUN1Z5STG21270 | casting of reinforced concrete for Beams And Slab-TUN1-Z5-STG2-Concrete Works-Slab | 2026-08-24 → 2026-10-05 A (+42d) | 2026-09-01 → 2026-11-01 A (+61d) | 0% → 100% |  |
| RHD4CTUN1Z5STG21280 | De-shuttering and Curing Works for Beams And Slab-TUN1-Z5-STG2-Concrete Works-Slab | 2026-09-02 → 2027-01-01 (+121d) | 2026-09-27 → 2027-01-26 (+121d) |  |  |
| 26 | **RHD4-02-002 - Tunnel 1 - Concrete Works - Concrete Parapet** | 2026-09-28 → 2027-01-27 (+121d) | 2026-10-13 → 2027-02-12 (+122d) |  |  |
| RHD4CTUN1Z5STG21290 | shuttering Works for Parapet-TUN1-Z5-STG2-Concrete Works-Concrete Parapet | 2026-09-28 → 2027-01-27 (+121d) | 2026-09-30 → 2027-01-30 (+122d) |  |  |
| RHD4CTUN1Z5STG21300 | Steel fixing Works for Parapet-TUN1-Z5-STG2-Concrete Works-Concrete Parapet | 2026-10-01 → 2027-01-31 (+122d) | 2026-10-06 → 2027-02-04 (+121d) |  |  |
| RHD4CTUN1Z5STG21310 | casting of reinforced concrete for Parapet-TUN1-Z5-STG2-Concrete Works-Concrete Parapet | 2026-10-07 → 2027-02-06 (+122d) | 2026-10-08 → 2027-02-07 (+122d) |  |  |
| RHD4CTUN1Z5STG21320 | De-shuttering and Curing Works for Parapet-TUN1-Z5-STG2-Concrete Works-Concrete Parapet | 2026-10-09 → 2027-02-08 (+122d) | 2026-10-13 → 2027-02-12 (+122d) |  |  |
| 27 | **RDH4-01-001 - Tunnel 1 - Painting Works - Finishing** | 2026-09-28 → 2027-01-27 (+121d) | 2026-10-02 → 2027-01-31 (+121d) |  |  |
| RHD4CTUN1Z5STG21900 | Tunnel Painting-TUN1-Z5-STG2-Painting Works-Finishing | 2026-09-28 → 2027-01-27 (+121d) | 2026-10-02 → 2027-01-31 (+121d) |  |  |
| 27 | **RHD4-02-002 - Tunnel 1 - STG 2 - MEP Works** | 2027-01-24 → 2027-07-17 (+174d) | 2027-05-29 → 2027-11-10 (+165d) |  |  |
| 28 | **RHD4-02-002 - Tunnel 1 - MEP Works - Electrical Works** | 2027-01-24 → 2027-07-17 (+174d) | 2027-05-29 → 2027-11-10 (+165d) |  |  |
| 29 | **RHD4-02-002 - Tunnel 1 - Electrical Works - Low Voltage** | 2027-01-24 → 2027-07-17 (+174d) | 2027-05-29 → 2027-11-10 (+165d) |  |  |
| RHD4CTUN1Z5STG21330 | Marking, Cutting & Chasing and Putting LV Conduits in Walls-TUN1-Z5-STG2-MEP Works-Electrical Works | 2027-01-24 → 2027-07-17 (+174d) | 2027-01-27 → 2027-07-20 (+174d) |  |  |
| RHD4CTUN1Z5STG21340 | Hanger & Support Installation for LV System-TUN1-Z5-STG2-MEP Works-Electrical Works | 2027-01-28 → 2027-07-21 (+174d) | 2027-02-15 → 2027-08-08 (+174d) |  |  |
| RHD4CTUN1Z5STG21350 | Cable Tray Installation for LV System-TUN1-Z5-STG2-MEP Works-Electrical Works | 2027-02-16 → 2027-08-09 (+174d) | 2027-03-07 → 2027-08-26 (+172d) |  |  |
| RHD4CTUN1Z5STG21360 | Exposed LV Conduits Installation-TUN1-Z5-STG2-MEP Works-Electrical Works | 2027-03-08 → 2027-08-28 (+173d) | 2027-03-29 → 2027-09-14 (+169d) |  |  |
| RHD4CTUN1Z5STG21370 | Pulling Cables & Wires for LV Systems-TUN1-Z5-STG2-MEP Works-Electrical Works | 2027-03-30 → 2027-09-15 (+169d) | 2027-04-17 → 2027-10-04 (+170d) |  |  |
| RHD4CTUN1Z5STG21390 | Wiring Devices Installation for LV System -TUN1-Z5-STG2-MEP Works-Electrical Works | 2027-04-18 → 2027-10-05 (+170d) | 2027-05-05 → 2027-10-23 (+171d) |  |  |
| RHD4CTUN1Z5STG21380 | Lighting Fixtures Installation-TUN1-Z5-STG2-MEP Works-Electrical Works | 2027-05-06 → 2027-10-24 (+171d) | 2027-05-29 → 2027-11-10 (+165d) |  | resources Outdoor Lighting Fixtures - L5 lighting units of the (LED) type [53 nr]; Outdoor Lighting Fixtures - L6 lighting units of the (LED) type [6 nr]; Unskilled Labor [0.76 h]; Electrician [1.09 h] → Outdoor Lighting Fixtures - L5 lighting units of the (LED) type [53 nr]; Outdoor Lighting Fixtures - L6 lighting units of the (LED) type [6 nr]; Unskilled Labor [0.8 h]; Electrician [1.09 h] |
| 30 | **RHD4-02-002 - Tunnel 1 - Electrical Works - Light Current** | 2027-03-08 → 2027-08-28 (+173d) | 2027-04-26 → 2027-10-13 (+170d) |  |  |
| RHD4CTUN1Z5STG21400 | Marking, Cutting & Chasing and Putting LC Conduits-TUN1-Z5-STG2-MEP Works-Electrical Works | 2027-03-08 → 2027-08-28 (+173d) | 2027-03-18 → 2027-09-04 (+170d) |  |  |
| RHD4CTUN1Z5STG21410 | Hanger & Support Installation for LC System-TUN1-Z5-STG2-MEP Works-Electrical Works | 2027-03-20 → 2027-09-05 (+169d) | 2027-03-27 → 2027-09-12 (+169d) |  |  |
| RHD4CTUN1Z5STG21420 | Cable Trunk Installation for LC System-TUN1-Z5-STG2-MEP Works-Electrical Works | 2027-03-28 → 2027-09-13 (+169d) | 2027-04-04 → 2027-09-20 (+169d) |  |  |
| RHD4CTUN1Z5STG21430 | Exposed LC Conduits Installation-TUN1-Z5-STG2-MEP Works-Electrical Works | 2027-04-05 → 2027-09-21 (+169d) | 2027-04-12 → 2027-09-29 (+170d) |  |  |
| RHD4CTUN1Z5STG21440 | Pulling Cables for lighting control system (DALI)-TUN1-Z5-STG2-MEP Works-Electrical Works | 2027-04-13 → 2027-09-30 (+170d) | 2027-04-15 → 2027-10-03 (+171d) |  |  |
| RHD4CTUN1Z5STG21450 | Pulling Cables for Fire Alarm System-TUN1-Z5-STG2-MEP Works-Electrical Works | 2027-04-13 → 2027-09-30 (+170d) | 2027-04-15 → 2027-10-03 (+171d) |  |  |
| RHD4CTUN1Z5STG21460 | Pulling Cables for IP CCTV-TUN1-Z5-STG2-MEP Works-Electrical Works | 2027-04-13 → 2027-09-30 (+170d) | 2027-04-17 → 2027-10-04 (+170d) |  |  |
| RHD4CTUN1Z5STG21470 | lighting control system (DALI) Devices Installation -TUN1-Z5-STG2-MEP Works-Electrical Works | 2027-04-17 → 2027-10-04 (+170d) | 2027-04-19 → 2027-10-06 (+170d) |  |  |
| RHD4CTUN1Z5STG21480 | Fire Alarm Devices Installation-TUN1-Z5-STG2-MEP Works-Electrical Works | 2027-04-20 → 2027-10-07 (+170d) | 2027-04-22 → 2027-10-10 (+171d) |  |  |
| RHD4CTUN1Z5STG21490 | IP CCTV Devices Installation-TUN1-Z5-STG2-MEP Works-Electrical Works | 2027-04-24 → 2027-10-11 (+170d) | 2027-04-26 → 2027-10-13 (+170d) |  |  |
| 31 | **RHD4-02-002 - Tunnel 1 - Stage 03** |  | 2026-11-15 → 2027-04-10 (+146d) |  |  |
| 32 | **RHD4-02-002 - Tunnel 1 - STG 3 - Concrete works** |  | 2026-11-15 → 2027-04-10 (+146d) |  |  |
| 33 | **RHD4-02-002 - Tunnel 1 - Concrete works - PC Foundation** |  | 2026-08-20 → 2026-09-10 (+21d) |  |  |
| RHD4CTUN1Z5STG31000 | PC Footing Shuttering Works -TUN1-Z5-STG3-Concrete works -PC Foundation | 2026-08-10 A | 2026-08-11 → 2026-08-30 A (+19d) | 0% → 100% | resources Supply and cast in place plain concrete 100 mm thickness lean concrete under the foundation for (Sewer and Storm Pump station) and (tunnels) [69.85 m2]; Carpenter [1281.36 h]; Skilled labor [60.99 h]; Unskilled Labor [183.07 h]; Equipment Opreator [3.81 h]; Bobcat [4.79 h] → Supply and cast in place plain concrete 100 mm thickness lean concrete under the foundation for (Sewer and Storm Pump station) and (tunnels) [69.85 m2]; Carpenter [1281.36 h]; Skilled labor [60.99 h]; Unskilled Labor [183.07 h]; Equipment Opreator [3.81 h]; Bobcat [4.8 h] |
| RHD4CTUN1Z5STG31010 | Casting of 100mm Blinding Concrete Under Foundation-TUN1-Z5-STG3-Concrete works -PC Foundation | 2026-08-12 A | 2026-08-13 → 2026-09-01 A (+19d) | 0% → 100% |  |
| RHD4CTUN1Z5STG31020 | Applying 2 layers of waterproofing bitumenous membrane 4mm below footings-TUN1-Z5-STG3-Concrete works -PC Foundation | 2026-08-15 A | 2026-08-17 → 2026-09-07 A (+21d) | 0% → 100% |  |
| RHD4CTUN1Z5STG31030 | Casting of 50mm Screed for Membrane Protection-TUN1-Z5-STG3-Concrete works -PC Foundation | 2026-08-18 A | 2026-08-20 → 2026-09-10 A (+21d) | 0% → 100% | resources Supply and cast in place screed concrete 50 mm thickness screed concrete for protecting waterproofing under the foundation for (Sewer and Storm Pump station) and (tunnels) [20.58 m2]; Mason [998.43 h]; Unskilled Labor [1664.15 h]; Equipment Opreator [125.02 h]; Bobcat [26.03 h]; Concrete Mixer Truck [130.25 h] → Supply and cast in place screed concrete 50 mm thickness screed concrete for protecting waterproofing under the foundation for (Sewer and Storm Pump station) and (tunnels) [20.58 m2]; Mason [998.4 h]; Unskilled Labor [1664.15 h]; Equipment Opreator [125.02 h]; Bobcat [26.03 h]; Concrete Mixer Truck [130.25 h] |
| 34 | **RHD4-02-002 - Tunnel 1 - Concrete works - RC Foundation** |  | 2026-09-11 → 2026-09-22 (+11d) |  |  |
| RHD4CTUN1Z5STG31040 | Shuttering Works for RC Footing-TUN1-Z5-STG3-Concrete works -RC Foundation | 2026-08-22 A | 2026-08-26 → 2026-09-16 A (+21d) | 0% → 100% |  |
| RHD4CTUN1Z5STG31050 | Steel fixing Works for RC Footing -TUN1-Z5-STG3-Concrete works -RC Foundation | 2026-08-27 A | 2026-09-01 → 2026-09-20 A (+19d) | 0% → 100% |  |

| ID | Task | Start | Finish | Complete | Other |
| --- | --- | --- | --- | --- | --- |
| RHD4CTUN1Z5STG31060 | casting of reinforced concrete for RC Footing -TUN1-Z5-STG3-Concrete works -RC Foundation | 2026-09-02 A | 2026-09-06 → 2026-09-22 A (+16d) | 0% → 100% |  |
| RHD4CTUN1Z5STG31070 | De-shuttering and Curing Works for RC Footing -TUN1-Z5-STG3-Concrete works -RC Foundation | 2026-09-07 A | 2026-09-11 → 2026-09-12 A (+1d) | 0% → 100% |  |
| 35 | **RHD4-02-002 - Tunnel 1 - Concrete works - Under Ground Walls** |  | 2026-11-15 → 2027-04-10 (+146d) |  |  |
| 36 | **RHD4-02-002 - Tunnel 1 - Under Ground Walls - Stage 1 (Up to 3m)** |  | 2026-10-30 → 2026-10-07 (-23d) |  |  |
| RHD4CTUN1Z5STG31080 | shuttering Works of Three Sides for Walls <Stage 01>-TUN1-Z5-STG3-Concrete works -Under Ground Walls | 2026-09-12 A | 2026-09-16 → 2026-09-27 A (+11d) | 0% → 100% |  |
| RHD4CTUN1Z5STG31090 | Steel fixing Works for Walls <Stage 01>-TUN1-Z5-STG3-Concrete works -Under Ground Walls | 2026-09-17 A | 2026-09-22 → 2026-10-01 A (+9d) | 0% → 100% |  |
| RHD4CTUN1Z5STG31100 | shuttering Works of the 4th Side for Walls <Stage 01>-TUN1-Z5-STG3-Concrete works -Under Ground Walls | 2026-09-24 A | 2026-09-29 → 2026-10-03 A (+4d) | 0% → 100% |  |
| RHD4CTUN1Z5STG31110 | casting of reinforced concrete for Walls <Stage 01>-TUN1-Z5-STG3-Concrete works -Under Ground Walls | 2026-09-30 → 2026-10-04 A (+4d) | 2026-10-04 → 2026-10-05 A (+1d) | 0% → 100% |  |
| RHD4CTUN1Z5STG31120 | De-shuttering and Curing Works for Walls <Stage 01>-TUN1-Z5-STG3-Concrete works -Under Ground Walls | 2026-10-27 → 2026-10-06 A (-21d) | 2026-10-30 → 2026-10-07 A (-23d) | 0% → 100% |  |
| 37 | **RHD4-02-002 - Tunnel 1 - Under Ground Walls - Stage 2 (Up to 6m)** | 2026-10-05 → 2026-09-24 (-11d) | 2026-10-26 → 2026-10-14 (-12d) |  |  |
| RHD4CTUN1Z5STG31130 | shuttering Works of Three Sides for Walls <Stage 02>-TUN1-Z5-STG3-Concrete works -Under Ground Walls | 2026-10-05 → 2026-09-24 A (-11d) | 2026-10-08 → 2026-09-28 A (-10d) | 0% → 100% |  |
| RHD4CTUN1Z5STG31140 | Steel fixing Works for Walls <Stage 02>-TUN1-Z5-STG3-Concrete works -Under Ground Walls | 2026-10-10 → 2026-09-27 A (-13d) | 2026-10-13 → 2026-09-30 A (-13d) | 0% → 100% |  |
| RHD4CTUN1Z5STG31150 | shuttering Works of the 4th Side for Walls <Stage 02>-TUN1-Z5-STG3-Concrete works -Under Ground Walls | 2026-10-14 → 2026-10-01 A (-13d) | 2026-10-18 → 2026-10-05 A (-13d) | 0% → 100% |  |
| RHD4CTUN1Z5STG31160 | casting of reinforced concrete for Walls <Stage 02>-TUN1-Z5-STG3-Concrete works -Under Ground Walls | 2026-10-19 → 2026-10-06 A (-13d) | 2026-10-22 → 2026-10-10 A (-12d) | 0% → 100% |  |
| RHD4CTUN1Z5STG31170 | De-shuttering and Curing Works for Walls <Stage 02>-TUN1-Z5-STG3-Concrete works -Under Ground Walls | 2026-10-23 → 2026-10-11 A (-12d) | 2026-10-26 → 2026-10-14 A (-12d) | 0% → 100% |  |
| 38 | **RHD4-02-002 - Tunnel 1 - Under Ground Walls - Stage 3 (Up to 9m)** | 2026-10-05 → 2026-09-24 (-11d) | 2026-11-15 → 2027-04-10 (+146d) |  |  |
| RHD4CTUN1Z5STG31180 | shuttering Works of Three Sides for Walls <Stage 03>-TUN1-Z5-STG3-Concrete works -Under Ground Walls | 2026-10-05 → 2026-09-24 A (-11d) | 2026-10-08 → 2026-09-28 A (-10d) | 0% → 100% |  |
| RHD4CTUN1Z5STG31190 | Steel fixing Works for Walls <Stage 03>-TUN1-Z5-STG3-Concrete works -Under Ground Walls | 2026-10-10 → 2026-09-27 A (-13d) | 2026-10-13 → 2026-09-30 A (-13d) | 0% → 100% |  |
| RHD4CTUN1Z5STG31200 | shuttering Works of the 4th Side for Walls <Stage 03>-TUN1-Z5-STG3-Concrete works -Under Ground Walls | 2026-10-14 → 2026-10-01 A (-13d) | 2026-10-18 → 2026-10-05 A (-13d) | 0% → 100% |  |
| RHD4CTUN1Z5STG31210 | casting of reinforced concrete for Walls <Stage 03>-TUN1-Z5-STG3-Concrete works -Under Ground Walls | 2026-10-19 → 2026-10-06 A (-13d) | 2026-10-22 → 2027-01-05 (+75d) | 0% → 90% |  |
| RHD4CTUN1Z5STG31220 | De-shuttering and Curing Works for Walls <Stage 03>-TUN1-Z5-STG3-Concrete works -Under Ground Walls | 2026-10-24 → 2027-01-06 (+74d) | 2026-10-27 → 2027-01-10 (+75d) |  |  |
| RHD4CTUN1Z5STG31230 | Installation of 2 layers of 4mm bitumenous waterproofing membrane <Stage 03>-TUN1-Z5-STG3-Concrete works -Under Ground W | 2026-10-28 → 2027-03-23 (+146d) | 2026-11-05 → 2027-03-31 (+146d) |  |  |
| RHD4CTUN1Z5STG31240 | Installation of Protection board for waterproofing <Stage 03>-TUN1-Z5-STG3-Concrete works -Under Ground Walls | 2026-11-07 → 2027-04-01 (+145d) | 2026-11-15 → 2027-04-10 (+146d) |  |  |
| 5 | **RHD4-02-002 - Tunnel 1 - Stage 01** | 2026-08-10 → 2026-10-15 (+66d) | 2026-11-02 → 2027-03-30 (+148d) |  |  |
| 6 | **RHD4-02-002 - Tunnel 1 - STG 1 - Concrete Works** | 2026-08-10 → 2026-10-15 (+66d) | 2026-11-02 → 2027-03-30 (+148d) |  |  |
| 7 | **RHD4-02-002 - Tunnel 1 - Concrete Works - PC Foundation** | 2026-08-10 → 2026-10-15 (+66d) | 2026-08-18 → 2027-01-10 (+145d) |  |  |
| RHD4CTUN1Z5STG11000 | PC Footing Shuttering Works -TUN1-Z5-STG1-Concrete Works-PC Foundation | 2026-08-10 → 2026-10-15 A (+66d) | 2026-08-11 → 2027-01-03 (+145d) | 0% → 50% | resources Supply and cast in place plain concrete 100 mm thickness lean concrete under the foundation for (Sewer and Storm Pump station) and (tunnels) [69.85 m2]; Carpenter [1281.36 h]; Skilled labor [60.99 h]; Unskilled Labor [183.07 h]; Equipment Opreator [3.81 h]; Bobcat [4.79 h] → Supply and cast in place plain concrete 100 mm thickness lean concrete under the foundation for (Sewer and Storm Pump station) and (tunnels) [69.85 m2]; Carpenter [1281.36 h]; Skilled labor [60.99 h]; Unskilled Labor [183.07 h]; Equipment Opreator [3.81 h]; Bobcat [4.8 h] |
| RHD4CTUN1Z5STG11010 | Casting of 100mm Blinding Concrete Under Foundation-TUN1-Z5-STG1-Concrete Works-PC Foundation | 2026-08-12 → 2026-10-18 A (+67d) | 2026-08-13 → 2027-01-05 (+145d) | 0% → 50% |  |
| RHD4CTUN1Z5STG11020 | Applying 2 layers of waterproofing bitumenous membrane 4mm below footings-TUN1-Z5-STG1-Concrete Works-PC Foundation | 2026-08-15 → 2026-10-20 A (+66d) | 2026-08-16 → 2027-01-07 (+144d) | 0% → 50% |  |
| RHD4CTUN1Z5STG11030 | Casting of 50mm Screed for Membrane Protection-TUN1-Z5-STG1-Concrete Works-PC Foundation | 2026-08-17 → 2026-10-22 A (+66d) | 2026-08-18 → 2027-01-10 (+145d) | 0% → 50% | resources Supply and cast in place screed concrete 50 mm thickness screed concrete for protecting waterproofing under the foundation for (Sewer and Storm Pump station) and (tunnels) [20.58 m2]; Mason [998.43 h]; Unskilled Labor [1664.15 h]; Equipment Opreator [125.02 h]; Bobcat [26.03 h]; Concrete Mixer Truck [130.25 h] → Supply and cast in place screed concrete 50 mm thickness screed concrete for protecting waterproofing under the foundation for (Sewer and Storm Pump station) and (tunnels) [20.58 m2]; Mason [998.4 h]; Unskilled Labor [1664.15 h]; Equipment Opreator [125.02 h]; Bobcat [26.03 h]; Concrete Mixer Truck [130.25 h] |
| 8 | **RHD4-02-002 - Tunnel 1 - Concrete Works - RC Foundation** | 2026-08-19 → 2026-10-27 (+69d) | 2026-09-07 → 2027-01-30 (+145d) |  |  |
| RHD4CTUN1Z5STG11040 | Shuttering Works for RC Footing-TUN1-Z5-STG1-Concrete Works-RC Foundation | 2026-08-19 → 2026-10-27 A (+69d) | 2026-08-23 → 2027-01-14 (+144d) | 0% → 50% |  |
| RHD4CTUN1Z5STG11050 | Steel fixing Works for RC Footing -TUN1-Z5-STG1-Concrete Works-RC Foundation | 2026-08-24 → 2026-10-29 A (+66d) | 2026-08-29 → 2027-01-20 (+144d) | 0% → 50% |  |
| RHD4CTUN1Z5STG11060 | casting of reinforced concrete for RC Footing -TUN1-Z5-STG1-Concrete Works-RC Foundation | 2026-08-30 → 2026-10-31 A (+62d) | 2026-09-02 → 2027-01-25 (+145d) | 0% → 50% |  |
| RHD4CTUN1Z5STG11070 | De-shuttering and Curing Works for RC Footing -TUN1-Z5-STG1-Concrete Works-RC Foundation | 2026-09-03 → 2026-11-01 A (+59d) | 2026-09-07 → 2027-01-30 (+145d) | 0% → 50% |  |
| 9 | **RHD4-02-002 - Tunnel 1 - Concrete Works - Under Ground Walls** | 2026-09-08 → 2027-01-31 (+145d) | 2026-11-02 → 2027-03-30 (+148d) |  |  |
| 10 | **RHD4-02-002 - Tunnel 1 - Under Ground Walls - Stage 1 (Up to 3m)** | 2026-09-08 → 2027-01-31 (+145d) | 2026-10-03 → 2027-02-24 (+144d) |  |  |
| RHD4CTUN1Z5STG11080 | shuttering Works of Three Sides for Walls <Stage 01>-TUN1-Z5-STG1-Concrete Works-Under Ground Walls | 2026-09-08 → 2027-01-31 (+145d) | 2026-09-13 → 2027-02-04 (+144d) |  |  |
| RHD4CTUN1Z5STG11090 | Steel fixing Works for Walls <Stage 01>-TUN1-Z5-STG1-Concrete Works-Under Ground Walls | 2026-09-14 → 2027-02-06 (+145d) | 2026-09-19 → 2027-02-10 (+144d) |  |  |
| RHD4CTUN1Z5STG11100 | shuttering Works of the 4th Side for Walls <Stage 01>-TUN1-Z5-STG1-Concrete Works-Under Ground Walls | 2026-09-20 → 2027-02-11 (+144d) | 2026-09-24 → 2027-02-15 (+144d) |  |  |
| RHD4CTUN1Z5STG11110 | casting of reinforced concrete for Walls <Stage 01>-TUN1-Z5-STG1-Concrete Works-Under Ground Walls | 2026-09-26 → 2027-02-16 (+143d) | 2026-09-29 → 2027-02-20 (+144d) |  |  |
| RHD4CTUN1Z5STG11120 | De-shuttering and Curing Works for Walls <Stage 01>-TUN1-Z5-STG1-Concrete Works-Under Ground Walls | 2026-09-30 → 2027-02-21 (+144d) | 2026-10-03 → 2027-02-24 (+144d) |  |  |
| 11 | **RHD4-02-002 - Tunnel 1 - Under Ground Walls - Stage 2 (Up to 6m)** | 2026-10-04 → 2027-02-25 (+144d) | 2026-10-25 → 2027-03-22 (+148d) |  |  |
| RHD4CTUN1Z5STG11130 | shuttering Works of Three Sides for Walls <Stage 02>-TUN1-Z5-STG1-Concrete Works-Under Ground Walls | 2026-10-04 → 2027-02-25 (+144d) | 2026-10-07 → 2027-03-01 (+145d) |  |  |
| RHD4CTUN1Z5STG11140 | Steel fixing Works for Walls <Stage 02>-TUN1-Z5-STG1-Concrete Works-Under Ground Walls | 2026-10-08 → 2027-03-02 (+145d) | 2026-10-12 → 2027-03-06 (+145d) |  |  |
| RHD4CTUN1Z5STG11150 | shuttering Works of the 4th Side for Walls <Stage 02>-TUN1-Z5-STG1-Concrete Works-Under Ground Walls | 2026-10-13 → 2027-03-07 (+145d) | 2026-10-17 → 2027-03-14 (+148d) |  |  |
| RHD4CTUN1Z5STG11160 | casting of reinforced concrete for Walls <Stage 02>-TUN1-Z5-STG1-Concrete Works-Under Ground Walls | 2026-10-18 → 2027-03-15 (+148d) | 2026-10-21 → 2027-03-18 (+148d) |  |  |
| RHD4CTUN1Z5STG11170 | De-shuttering and Curing Works for Walls <Stage 02>-TUN1-Z5-STG1-Concrete Works-Under Ground Walls | 2026-10-22 → 2027-03-19 (+148d) | 2026-10-25 → 2027-03-22 (+148d) |  |  |
| 12 | **RHD4-02-002 - Tunnel 1 - Under Ground Walls - Stage 3 (Up to 9m)** | 2026-10-04 → 2027-02-25 (+144d) | 2026-11-02 → 2027-03-30 (+148d) |  |  |
| RHD4CTUN1Z5STG11180 | shuttering Works of Three Sides for Walls <Stage 03>-TUN1-Z5-STG1-Concrete Works-Under Ground Walls | 2026-10-04 → 2027-02-25 (+144d) | 2026-10-07 → 2027-03-01 (+145d) |  |  |
| RHD4CTUN1Z5STG11190 | Steel fixing Works for Walls <Stage 03>-TUN1-Z5-STG1-Concrete Works-Under Ground Walls | 2026-10-08 → 2027-03-02 (+145d) | 2026-10-12 → 2027-03-06 (+145d) |  |  |
| RHD4CTUN1Z5STG11200 | shuttering Works of the 4th Side for Walls <Stage 03>-TUN1-Z5-STG1-Concrete Works-Under Ground Walls | 2026-10-13 → 2027-03-07 (+145d) | 2026-10-17 → 2027-03-14 (+148d) |  |  |
| RHD4CTUN1Z5STG11210 | casting of reinforced concrete for Walls <Stage 03>-TUN1-Z5-STG1-Concrete Works-Under Ground Walls | 2026-10-18 → 2027-03-15 (+148d) | 2026-10-20 → 2027-03-17 (+148d) |  |  |
| RHD4CTUN1Z5STG11220 | De-shuttering and Curing Works for Walls <Stage 03>-TUN1-Z5-STG1-Concrete Works-Under Ground Walls | 2026-10-21 → 2027-03-18 (+148d) | 2026-10-24 → 2027-03-21 (+148d) |  |  |
| RHD4CTUN1Z5STG11230 | Installation of 2 layers of bitumenous waterproofing membrane<Stage 03>-TUN1-Z5-STG1-Concrete Works-Under Ground Walls | 2026-10-25 → 2027-03-22 (+148d) | 2026-10-28 → 2027-03-25 (+148d) |  |  |
| RHD4CTUN1Z5STG11240 | Installation of Protection board for waterproofing <Stage 03>-TUN1-Z5-STG1-Concrete Works-Under Ground Walls | 2026-10-29 → 2027-03-27 (+149d) | 2026-11-02 → 2027-03-30 (+148d) |  |  |
| 1 | **Stations** | 2026-12-05 → 2026-10-20 (-46d) | 2027-10-21 → 2028-05-08 (+200d) |  |  |
| 160 | **Storm Lift Station 01** | 2026-12-05 → 2026-10-27 (-39d) | 2027-10-21 → 2028-05-08 (+200d) |  |  |
| 161 | **RHD4-02-002-Storm Lift Station 01-Wet Well Structure And Valve Chamber** | 2026-12-05 → 2026-10-27 (-39d) | 2027-04-01 → 2027-09-06 (+158d) |  |  |
| 162 | **RHD4-02-002-STL1-Wet Well** | 2026-12-05 → 2026-10-27 (-39d) | 2027-04-01 → 2027-09-06 (+158d) |  |  |
| 163 | **RHD4-02-002-STL1-B07-Concrete works Wet Well** | 2026-12-05 → 2026-10-27 (-39d) | 2027-01-03 → 2027-06-14 (+162d) |  |  |
| RHD4CSTL1B07D021001 | Lean Concrete for Plain Concrete for Wet Well - (B7.03 00 00 .01)-STL1-B07-D02 | 2026-12-05 → 2026-10-27 A (-39d) | 2026-12-10 → 2026-11-01 A (-39d) | 0% → 100% |  |
| RHD4CSTL1B07D021002 | Water proofing membrance for Wet well structure - (B7.07 13 13.01)-STL1-B07-D02 | 2026-12-12 → 2027-05-23 (+162d) | 2026-12-20 → 2027-05-31 (+162d) |  |  |
| RHD4CSTL1B07D021003 | Screed for Wet well structurefor Wet Well - (B7.03 00 00 .04)-STL1-B07-D02 | 2026-12-21 → 2027-06-01 (+162d) | 2026-12-23 → 2027-06-03 (+162d) |  |  |
| RHD4CSTL1B07D021004 | Steel Fixing foundations for Wet well structure - (B7.03 00 00 .05)-STL1-B07-D02 | 2026-12-24 → 2027-06-05 (+163d) | 2026-12-28 → 2027-06-08 (+162d) |  |  |
| RHD4CSTL1B07D021005 | Formwork foundations for Wet well structure - (B7.03 00 00 .05)-STL1-B07-D02 | 2026-12-29 → 2027-06-09 (+162d) | 2026-12-30 → 2027-06-10 (+162d) |  |  |
| RHD4CSTL1B07D021006 | RC Casting foundations for Wet well structure - (B7.03 00 00 .05)-STL1-B07-D02 | 2026-12-31 → 2027-06-12 (+163d) | 2027-01-03 → 2027-06-14 (+162d) |  |  |
| 164 | **RHD4-02-002-STL1-B07-Valve Chamber** | 2027-01-04 → 2027-06-15 (+162d) | 2027-01-23 → 2027-07-04 (+162d) |  |  |
| RHD4CSTL1B07D021008 | Water proofing membrance for Wet well structure - (B7.07 13 13.01)-STL1-B07-D02 | 2027-01-04 → 2027-06-15 (+162d) | 2027-01-07 → 2027-06-19 (+163d) |  |  |
| RHD4CSTL1B07D021009 | Screed for Wet well structure - (B7.03 00 00 .04)-STL1-B07-D02 | 2027-01-09 → 2027-06-20 (+162d) | 2027-01-11 → 2027-06-22 (+162d) |  |  |

| ID | Task | Start | Finish | Duration | Complete |
| --- | --- | --- | --- | --- | --- |
| RHD4CSTL1B07D021010 | Steel Fixing foundations for Wet well structure - (B7.03 00 00 .05)-STL1-B07-D02 | 2027-01-12 → 2027-06-23 (+162d) | 2027-01-16 → 2027-06-27 (+162d) |  |  |
| RHD4CSTL1B07D021011 | Formwork foundations for Wet well structure - (B7.03 00 00 .05)-STL1-B07-D02 | 2027-01-17 → 2027-06-28 (+162d) | 2027-01-20 → 2027-07-01 (+162d) |  |  |
| RHD4CSTL1B07D021012 | RC Casting foundations for Wet well structure - (B7.03 00 00 .05)-STL1-B07-D02 | 2027-01-21 → 2027-07-03 (+163d) | 2027-01-23 → 2027-07-04 (+162d) |  |  |
| 165 | **RHD4-02-002-STL1-B07-Retaining Walls & Slab** | 2027-01-24 → 2027-07-05 (+162d) | 2027-02-11 → 2027-07-24 (+163d) |  |  |
| RHD4CSTL1B07D021013 | Steel Fixing for Wet well structure - (B7.03 00 00 .07)-STL1-B07-D02 | 2027-01-24 → 2027-07-05 (+162d) | 2027-01-28 → 2027-07-10 (+163d) |  |  |
| RHD4CSTL1B07D021014 | Formwork for Wet well structure - (B7.03 00 00 .07)-STL1-B07-D02 | 2027-01-30 → 2027-07-11 (+162d) | 2027-02-02 → 2027-07-14 (+162d) |  |  |
| RHD4CSTL1B07D021015 | RC Casting for Wet well structure - (B7.03 00 00 .07)-STL1-B07-D02 | 2027-02-03 → 2027-07-15 (+162d) | 2027-02-07 → 2027-07-19 (+162d) |  |  |
| RHD4CSTL1B07D021016 | Water protection Board membrance for Wet well structure - (B7.07 13 13.02)-STL1-B07-D02 | 2027-02-08 → 2027-07-20 (+162d) | 2027-02-11 → 2027-07-24 (+163d) |  |  |
| 166 | **RHD4-02-002-STL1-B07-Finishes** | 2027-02-13 → 2027-07-25 (+162d) | 2027-02-23 → 2027-08-03 (+161d) |  |  |
| RHD4CSTL1B07D091017 | Epoxy Coating for Wet well structure - (B7.09 96 56.01)-STL1-B07-D09 | 2027-02-13 → 2027-07-25 (+162d) | 2027-02-16 → 2027-07-28 (+162d) |  |  |
| RHD4CSTL1B07D091018 | External Plastering for walls 20mm - (B7.09 24 00.02)-STL1-B07-D09 | 2027-02-17 → 2027-07-29 (+162d) | 2027-02-23 → 2027-08-03 (+161d) |  |  |
| 167 | **RHD4-02-002-STL1-B07-Metal Doors** | 2027-02-24 → 2027-08-04 (+161d) | 2027-03-01 → 2027-08-09 (+161d) |  |  |
| RHD4CSTL1B07D051022 | metal floor door size (1000x1000mm) for Wet well structure - (B7.08 31 13.04)-STL1-B07-D05 | 2027-02-24 → 2027-08-04 (+161d) | 2027-03-01 → 2027-08-09 (+161d) |  |  |
| 168 | **RHD4-02-002-STL1-B07-Screening Container** | 2027-03-02 → 2027-08-10 (+161d) | 2027-03-04 → 2027-08-12 (+161d) |  |  |
| RHD4CSTL1B07D151023 | Steel Container Screening Installation - (B7.46 21 00.01)-STL1-B07-D15 | 2027-03-02 → 2027-08-10 (+161d) | 2027-03-04 → 2027-08-12 (+161d) |  |  |
| 169 | **RHD4-02-002-STL1-B07-Motorized basket screen** | 2027-03-06 → 2027-08-14 (+161d) | 2027-03-28 → 2027-09-01 (+157d) |  |  |
| RHD4CSTL1B07D151024 | Basket Screen Frame Mounting - (B7.46 21 00.011)-STL1-B07-D15 | 2027-03-06 → 2027-08-14 (+161d) | 2027-03-14 → 2027-08-18 (+157d) |  |  |
| RHD4CSTL1B07D151025 | Basket Screen Alignment - (B7.46 21 00.011)-STL1-B07-D15 | 2027-03-15 → 2027-08-19 (+157d) | 2027-03-21 → 2027-08-25 (+157d) |  |  |
| RHD4CSTL1B07D151026 | Motor and Drive System Installation - (B7.46 21 00.011)-STL1-B07-D15 | 2027-03-22 → 2027-08-26 (+157d) | 2027-03-28 → 2027-09-01 (+157d) |  |  |
| 170 | **RHD4-02-002-STL1-B07-Pumps** | 2027-03-29 → 2027-09-02 (+157d) | 2027-04-01 → 2027-09-06 (+158d) |  |  |
| RHD4CSTL1B07D151027 | Constant Speed Submersible pump Installation - 20 lps - (B7. 22 14 29.16.03)-STL1-B07-D15 | 2027-03-29 → 2027-09-02 (+157d) | 2027-04-01 → 2027-09-06 (+158d) |  |  |
| 171 | **RHD4-02-002-STL1-B07-Gate Valves** | 2027-01-24 → 2027-07-05 (+162d) | 2027-01-30 → 2027-07-11 (+162d) |  |  |
| RHD4CSTL1B07D151029 | Manually operated Gate Valve DN150 for - (B7.22 05 23.03)-STL1-B07-D15 | 2027-01-24 → 2027-07-05 (+162d) | 2027-01-30 → 2027-07-11 (+162d) |  |  |
| 172 | **RHD4-02-002-STL1-B07-Non-Return Valve** | 2027-01-31 → 2027-07-12 (+162d) | 2027-02-06 → 2027-07-18 (+162d) |  |  |
| RHD4CSTL1B07D151030 | Check Valve with diameter 150mm. 150mm - (B7.22 05 24.03)-STL1-B07-D15 | 2027-01-31 → 2027-07-12 (+162d) | 2027-02-06 → 2027-07-18 (+162d) |  |  |
| 173 | **RHD4-02-002-STL1-Pump Lifting System** | 2027-02-07 → 2027-07-19 (+162d) | 2027-02-27 → 2027-08-07 (+161d) |  |  |
| 174 | **RHD4-02-002-STL1-Ductile Pipes & Fittings** | 2027-02-07 → 2027-07-19 (+162d) | 2027-02-20 → 2027-08-01 (+162d) |  |  |
| RHD4CSTL1B07D151031 | Buried ductile iron pipes with diameter 150 mm - (B7.22 11 13.07)-STL1-B07-D15 | 2027-02-07 → 2027-07-19 (+162d) | 2027-02-13 → 2027-07-25 (+162d) |  |  |
| RHD4CSTL1B07D151032 | Double flanged ductile iron pipe with diameter 150 mm - (B7.22 11 13.08)-STL1-B07-D15 | 2027-02-14 → 2027-07-26 (+162d) | 2027-02-20 → 2027-08-01 (+162d) |  |  |
| 175 | **RHD4-02-002-STL1-JIB Crane** | 2027-02-21 → 2027-08-02 (+162d) | 2027-02-27 → 2027-08-07 (+161d) |  |  |
| RHD4CSTL1B07D151033 | Install JIB Crane For storm and sewer pumping Stations - (B7.41 22 10.01)-STL1-B07-D15 | 2027-02-21 → 2027-08-02 (+162d) | 2027-02-27 → 2027-08-07 (+161d) |  |  |
| 176 | **RHD4-02-002-Storm Lift Station 01-Electrical Room** | 2026-12-12 → 2026-10-27 (-46d) | 2027-10-03 → 2028-04-16 (+196d) |  |  |
| 177 | **RHD4-02-002-STL1-Sub Structure** | 2026-12-12 → 2026-10-27 (-46d) | 2027-06-03 → 2027-10-31 (+150d) |  |  |
| 178 | **RHD4-02-002-STL1-Plain Concrete** | 2026-12-12 → 2026-10-27 (-46d) | 2027-01-18 → 2027-05-31 (+133d) |  |  |
| RHD4CSTL1B07D031034 | Shuttering Plain Concrete - (B7.03 00 00 .01)-STL1-B07-D03 | 2026-12-12 → 2026-10-27 A (-46d) | 2027-01-05 → 2026-10-31 A (-66d) | 22d → 4d | 0% → 100% |
| RHD4CSTL1B07D031035 | Lean Concrete Plain Concrete - (B7.03 00 00 .01)-STL1-B07-D03 | 2027-01-06 → 2026-10-29 A (-69d) | 2027-01-09 → 2026-11-01 A (-69d) |  | 0% → 100% |
| RHD4CSTL1B07D031036 | Water proofing membrance Plain Concrete - (B7.07 13 13.01)-STL1-B07-D03 | 2027-01-10 → 2027-05-23 (+133d) | 2027-01-14 → 2027-05-27 (+133d) |  |  |
| RHD4CSTL1B07D031037 | Screeding Plain Concrete - (B7.03 00 00 .04)-STL1-B07-D03 | 2027-01-16 → 2027-05-29 (+133d) | 2027-01-18 → 2027-05-31 (+133d) |  |  |
| 179 | **RHD4-02-002-STL1-Footing / Foundation** | 2027-01-19 → 2027-06-01 (+133d) | 2027-02-01 → 2027-06-14 (+133d) |  |  |
| RHD4CSTL1B07D031038 | Shuttering Foundation - (B7.03 00 00 .05)-STL1-B07-D03 | 2027-01-19 → 2027-06-01 (+133d) | 2027-01-21 → 2027-06-03 (+133d) |  |  |
| RHD4CSTL1B07D031039 | Steel Fixing Foundation - (B7.03 00 00 .05)-STL1-B07-D03 | 2027-01-23 → 2027-06-05 (+133d) | 2027-01-26 → 2027-06-08 (+133d) |  |  |
| RHD4CSTL1B07D031040 | RC Casting Foundation - (B7.03 00 00 .05)-STL1-B07-D03 | 2027-01-27 → 2027-06-09 (+133d) | 2027-01-30 → 2027-06-12 (+133d) |  |  |
| RHD4CSTL1B07D031041 | Deshuttering Foundation - (B7.03 00 00 .05)-STL1-B07-D03 | 2027-01-31 → 2027-06-13 (+133d) | 2027-02-01 → 2027-06-14 (+133d) |  |  |
| 180 | **RHD4-02-002-STL1-Neck Columns** | 2027-02-02 → 2027-06-15 (+133d) | 2027-02-20 → 2027-07-03 (+133d) |  |  |
| RHD4CSTL1B07D031042 | Steel Fixing Neck Columns - (B7.03 00 00 .06)-STL1-B07-D03 | 2027-02-02 → 2027-06-15 (+133d) | 2027-02-06 → 2027-06-19 (+133d) |  |  |
| RHD4CSTL1B07D031043 | Shuttering Neck Columns - (B7.03 00 00 .06)-STL1-B07-D03 | 2027-02-07 → 2027-06-20 (+133d) | 2027-02-09 → 2027-06-22 (+133d) |  |  |
| RHD4CSTL1B07D031044 | RC Casting Neck Columns - (B7.03 00 00 .06)-STL1-B07-D03 | 2027-02-10 → 2027-06-23 (+133d) | 2027-02-14 → 2027-06-27 (+133d) |  |  |
| RHD4CSTL1B07D031045 | Deshuttering Neck Columns - (B7.03 00 00 .06)-STL1-B07-D03 | 2027-02-15 → 2027-06-28 (+133d) | 2027-02-20 → 2027-07-03 (+133d) |  |  |
| 181 | **RHD4-02-002-STL1-Ground Beams** | 2027-02-21 → 2027-07-04 (+133d) | 2027-03-13 → 2027-08-12 (+152d) |  |  |
| RHD4CSTL1B07D031046 | Steel Fixing Ground Beams - (B7.03 00 00 .08)-STL1-B07-D03 | 2027-02-21 → 2027-07-04 (+133d) | 2027-02-27 → 2027-07-08 (+131d) |  |  |
| RHD4CSTL1B07D031047 | Shuttering Ground Beams - (B7.03 00 00 .08)-STL1-B07-D03 | 2027-02-28 → 2027-07-10 (+132d) | 2027-03-03 → 2027-07-13 (+132d) |  |  |
| RHD4CSTL1B07D031048 | RC Casting Ground Beams - (B7.03 00 00 .08)-STL1-B07-D03 | 2027-03-04 → 2027-08-08 (+157d) | 2027-03-06 → 2027-08-09 (+156d) |  |  |
| RHD4CSTL1B07D031049 | Deshuttering Ground Beams - (B7.03 00 00 .08)-STL1-B07-D03 | 2027-03-07 → 2027-08-10 (+156d) | 2027-03-13 → 2027-08-12 (+152d) |  |  |
| 182 | **RHD4-02-002-STL1-Aggregate base Course** | 2027-03-14 → 2027-08-14 (+153d) | 2027-03-21 → 2027-08-21 (+153d) |  |  |
| RHD4CSTL1B07D031050 | Laying Aggregate base course Slab on Grade - (B7.32 11 23.01)-STL1-B07-D03 | 2027-03-14 → 2027-08-14 (+153d) | 2027-03-18 → 2027-08-18 (+153d) |  |  |
| RHD4CSTL1B07D031051 | Compaction of aggregate base course Slab on Grade - (B7.32 11 23.01)-STL1-B07-D03 | 2027-03-20 → 2027-08-19 (+152d) | 2027-03-21 → 2027-08-21 (+153d) |  |  |
| 183 | **RHD4-02-002-STL1-Slab on Grade** | 2027-03-22 → 2027-08-22 (+153d) | 2027-04-10 → 2027-09-09 (+152d) |  |  |
| RHD4CSTL1B07D031052 | Screeding for SOG works Slab on Grade - (B7.03 00 00 .02)-STL1-B07-D03 | 2027-03-22 → 2027-08-22 (+153d) | 2027-03-25 → 2027-08-25 (+153d) |  |  |
| RHD4CSTL1B07D031053 | Shuttering Slab on Grade - (B7.03 00 00 .09)-STL1-B07-D03 | 2027-03-27 → 2027-08-26 (+152d) | 2027-03-31 → 2027-08-31 (+153d) |  |  |
| RHD4CSTL1B07D031054 | Steel Fixing Slab on Grade - (B7.03 00 00 .09)-STL1-B07-D03 | 2027-04-01 → 2027-09-01 (+153d) | 2027-04-04 → 2027-09-04 (+153d) |  |  |
| RHD4CSTL1B07D031055 | RC Casting Slab on Grade - (B7.03 00 00 .09)-STL1-B07-D03 | 2027-04-05 → 2027-09-05 (+153d) | 2027-04-07 → 2027-09-07 (+153d) |  |  |
| RHD4CSTL1B07D031056 | Deshuttering Slab on Grade - (B7.03 00 00 .09)-STL1-B07-D03 | 2027-04-08 → 2027-09-08 (+153d) | 2027-04-10 → 2027-09-09 (+152d) |  |  |
| 184 | **RHD4-02-002-STL1-Waterproofing** | 2027-04-11 → 2027-09-11 (+153d) | 2027-04-18 → 2027-09-18 (+153d) |  |  |
| RHD4CSTL1B07D071057 | 2 coats of bitumen on footings Slab on Grade - (B7.07 14 00.01)-STL1-B07-D07 | 2027-04-11 → 2027-09-11 (+153d) | 2027-04-13 → 2027-09-13 (+153d) |  |  |
| RHD4CSTL1B07D071058 | 2 coats of bitumen on Grade Beams and SOW Slab on Grade - (B7.07 14 00.01)-STL1-B07-D07 | 2027-04-14 → 2027-09-14 (+153d) | 2027-04-18 → 2027-09-18 (+153d) |  |  |
| 185 | **RHD4-02-002-STL1-Vapor Retarders** | 2027-04-19 → 2027-09-19 (+153d) | 2027-04-22 → 2027-09-22 (+153d) |  |  |
| RHD4CSTL1B07D071059 | 250 micron Polyethylene sheet Slab on Grade - (B7.07 26 16.01)-STL1-B07-D07 | 2027-04-19 → 2027-09-19 (+153d) | 2027-04-22 → 2027-09-22 (+153d) |  |  |
| 186 | **RHD4-02-002-STL1-Columns** | 2027-04-24 → 2027-09-25 (+154d) | 2027-05-05 → 2027-10-06 (+154d) |  |  |
| RHD4CSTL1B07D031060 | Shuttering Columns - (B7.03 00 00 .13)-STL1-B07-D03 | 2027-04-24 → 2027-09-25 (+154d) | 2027-04-25 → 2027-09-26 (+154d) |  |  |
| RHD4CSTL1B07D031061 | Steel Fixing Columns - (B7.03 00 00 .13)-STL1-B07-D03 | 2027-04-26 → 2027-09-27 (+154d) | 2027-04-29 → 2027-09-30 (+154d) |  |  |

| ID | Task | Start | Finish |
| --- | --- | --- | --- |
| RHD4CSTL1B07D031062 | RC Casting Columns - (B7.03 00 00 .13)-STL1-B07-D03 | 2027-05-01 → 2027-10-02 (+154d) | 2027-05-02 → 2027-10-03 (+154d) |
| RHD4CSTL1B07D031063 | Deshuttering Columns - (B7.03 00 00 .13)-STL1-B07-D03 | 2027-05-03 → 2027-10-04 (+154d) | 2027-05-05 → 2027-10-06 (+154d) |
| 187 | **RHD4-02-002-STL1-Slab Beams** | 2027-05-06 → 2027-10-07 (+154d) | 2027-05-23 → 2027-10-19 (+149d) |
| RHD4CSTL1B07D031064 | Shuttering Roof Slab - (B7.03 00 00 .14)-STL1-B07-D03 | 2027-05-06 → 2027-10-07 (+154d) | 2027-05-10 → 2027-10-11 (+154d) |
| RHD4CSTL1B07D031065 | Steel Fixing Roof Slab - (B7.03 00 00 .14)-STL1-B07-D03 | 2027-05-11 → 2027-10-12 (+154d) | 2027-05-13 → 2027-10-14 (+154d) |
| RHD4CSTL1B07D031066 | RC Casting Roof Slab - (B7.03 00 00 .14)-STL1-B07-D03 | 2027-05-19 → 2027-10-16 (+150d) | 2027-05-20 → 2027-10-17 (+150d) |
| RHD4CSTL1B07D031067 | Deshuttering Roof Slab - (B7.03 00 00 .14)-STL1-B07-D03 | 2027-05-22 → 2027-10-18 (+149d) | 2027-05-23 → 2027-10-19 (+149d) |
| 188 | **RHD4-02-002-STL1-Roof Slab** | 2027-05-24 → 2027-10-20 (+149d) | 2027-06-03 → 2027-10-31 (+150d) |
| RHD4CSTL1B07D031068 | Shuttering Roof Slab - (B7.03 00 00 .15)-STL1-B07-D03 | 2027-05-24 → 2027-10-20 (+149d) | 2027-05-26 → 2027-10-23 (+150d) |
| RHD4CSTL1B07D031069 | Steel Fixing Roof Slab - (B7.03 00 00 .15)-STL1-B07-D03 | 2027-05-27 → 2027-10-24 (+150d) | 2027-05-30 → 2027-10-26 (+149d) |
| RHD4CSTL1B07D031070 | RC Casting Roof Slab - (B7.03 00 00 .15)-STL1-B07-D03 | 2027-05-31 → 2027-10-27 (+149d) | 2027-06-01 → 2027-10-28 (+149d) |
| RHD4CSTL1B07D031071 | Deshuttering Roof Slab - (B7.03 00 00 .15)-STL1-B07-D03 | 2027-06-02 → 2027-10-30 (+150d) | 2027-06-03 → 2027-10-31 (+150d) |
| 189 | **RHD4-02-002-STL1-Electrical Room-Finishes** | 2027-06-05 → 2027-11-01 (+149d) | 2027-07-17 → 2027-12-13 (+149d) |
| 190 | **RHD4-02-002-STL1-Masonary** | 2027-06-05 → 2027-11-01 (+149d) | 2027-06-07 → 2027-11-03 (+149d) |
| RHD4CSTL1B07D091072 | Masonary Block work (CMU walls) Insulated Block Work - (B7.04 22 00.01)-STL1-B07-D09 | 2027-06-05 → 2027-11-01 (+149d) | 2027-06-07 → 2027-11-03 (+149d) |
| 191 | **RHD4-02-002-STL1-Roofs waterproofing system** | 2027-06-08 → 2027-11-04 (+149d) | 2027-06-23 → 2027-11-20 (+150d) |
| RHD4CSTL1B07D071073 | 250 micron Polyethylene sheet - (B7.07 00 00.06)-STL1-B07-D07 | 2027-06-08 → 2027-11-04 (+149d) | 2027-06-09 → 2027-11-06 (+150d) |
| RHD4CSTL1B07D071074 | 50 mm thick minimum Foam Concrete - (B7.07 00 00.05)-STL1-B07-D07 | 2027-06-10 → 2027-11-07 (+150d) | 2027-06-13 → 2027-11-09 (+149d) |
| RHD4CSTL1B07D071075 | 30 mm thick Screed Concrete - (B7.07 00 00.04)-STL1-B07-D07 | 2027-06-10 → 2027-11-07 (+150d) | 2027-06-13 → 2027-11-09 (+149d) |
| RHD4CSTL1B07D071076 | 4 mm thick Waterproofing Bituminous Membrane - (B7.07 00 00.03)-STL1-B07-D07 | 2027-06-14 → 2027-11-10 (+149d) | 2027-06-15 → 2027-11-11 (+149d) |
| RHD4CSTL1B07D071077 | Geotextile Membrane - (B7.07 00 00.02)-STL1-B07-D07 | 2027-06-16 → 2027-11-13 (+150d) | 2027-06-20 → 2027-11-16 (+149d) |
| RHD4CSTL1B07D071078 | 50 mm thick Gravel Toppings - (B7.07 00 00.01)-STL1-B07-D07 | 2027-06-21 → 2027-11-17 (+149d) | 2027-06-23 → 2027-11-20 (+150d) |
| 192 | **RHD4-02-002-STL1-Stone Copings** | 2027-06-24 → 2027-11-21 (+150d) | 2027-06-26 → 2027-11-22 (+149d) |
| RHD4CSTL1B07D091079 | Supply and install Stone coping 40mm thickness Insulated Block Work - (B7.07 71 13.01)-STL1-B07-D09 | 2027-06-24 → 2027-11-21 (+150d) | 2027-06-26 → 2027-11-22 (+149d) |
| 194 | **RHD4-02-002-STL1-Cement Plastering** | 2027-06-27 → 2027-11-23 (+149d) | 2027-06-30 → 2027-11-27 (+150d) |
| RHD4CSTL1B07D091081 | Internal Plastering For Walls 15mm - (B7.09 24 00.01)-STL1-B07-D09 | 2027-06-27 → 2027-11-23 (+149d) | 2027-06-30 → 2027-11-27 (+150d) |
| RHD4CSTL1B07D091082 | External Plastering for walls 20mm - (B7.09 24 00.02)-STL1-B07-D09 | 2027-06-27 → 2027-11-23 (+149d) | 2027-06-29 → 2027-11-25 (+149d) |
| 195 | **RHD4-02-002-STL1-Metal Ladders** | 2027-06-30 → 2027-11-27 (+150d) | 2027-07-05 → 2027-12-01 (+149d) |
| RHD4CSTL1B07D051085 | With cage, Length 3.6m - (B7.05 51 33.10)-STL1-B07-D05 | 2027-06-30 → 2027-11-27 (+150d) | 2027-07-05 → 2027-12-01 (+149d) |
| 196 | **RHD4-02-002-STL1-Painting** | 2027-07-06 → 2027-12-02 (+149d) | 2027-07-11 → 2027-12-07 (+149d) |
| RHD4CSTL1B07D091087 | Internal Acrylic Paint For Walls Acrylic Paint - (B7.09 91 00.01)-STL1-B07-D09 | 2027-07-06 → 2027-12-02 (+149d) | 2027-07-11 → 2027-12-07 (+149d) |
| RHD4CSTL1B07D091088 | External Acrylic Paint for walls Acrylic Paint - (B7.09 91 00.02)-STL1-B07-D09 | 2027-07-06 → 2027-12-02 (+149d) | 2027-07-11 → 2027-12-07 (+149d) |
| 197 | **RHD4-02-002-STL1-Epoxy Coating** | 2027-07-12 → 2027-12-08 (+149d) | 2027-07-17 → 2027-12-13 (+149d) |
| RHD4CSTL1B07D091090 | Internal Acrylic Paint For Walls Acrylic Paint - (B7.09 96 56.01)-STL1-B07-D09 | 2027-07-12 → 2027-12-08 (+149d) | 2027-07-17 → 2027-12-13 (+149d) |
| 198 | **RHD4-02-002-STL1-Mechanical Works** | 2027-06-02 → 2027-10-30 (+150d) | 2027-07-29 → 2027-12-26 (+150d) |
| 199 | **RHD4-02-002-STL1-Wall mounted Split/AC** | 2027-06-02 → 2027-10-30 (+150d) | 2027-06-23 → 2027-11-20 (+150d) |
| RHD4CSTL1B07D151091 | Wall mounted Split Air Conditioning Unit. FCU-01 Installation 3.6 kw - (B7.23 81 26.01)-STL1-B07-D15 | 2027-06-02 → 2027-10-30 (+150d) | 2027-06-13 → 2027-11-09 (+149d) |
| RHD4CSTL1B07D151092 | Wall mounted Split Air Conditioning Unit. FCU-01 Installation 3.6 kw - (B7.23 81 26.01)-STL1-B07-D15 | 2027-06-14 → 2027-11-10 (+149d) | 2027-06-23 → 2027-11-20 (+150d) |
| 200 | **RHD4-02-002-STL1-Portable Fire Extinguishers** | 2027-06-24 → 2027-11-21 (+150d) | 2027-07-13 → 2027-12-09 (+149d) |
| RHD4CSTL1B07D151093 | Powder fire extinguishers installation - (B7.21 20 00.01)-STL1-B07-D15 | 2027-06-24 → 2027-11-21 (+150d) | 2027-07-03 → 2027-11-29 (+149d) |
| RHD4CSTL1B07D151094 | CO2 fire extinguishers installation - (B7.21 20 00.02)-STL1-B07-D15 | 2027-07-04 → 2027-11-30 (+149d) | 2027-07-13 → 2027-12-09 (+149d) |
| 201 | **RHD4-02-002-STL1-Scupper** | 2027-07-14 → 2027-12-11 (+150d) | 2027-07-21 → 2027-12-18 (+150d) |
| RHD4CSTL1B07D151095 | Scupper with diameter 110mm - Installation - (B7.22 13 19.13.01)-STL1-B07-D15 | 2027-07-14 → 2027-12-11 (+150d) | 2027-07-21 → 2027-12-18 (+150d) |
| 202 | **RHD4-02-002-STL1-Pipes, Fittings & Appurtenances** | 2027-07-22 → 2027-12-19 (+150d) | 2027-07-29 → 2027-12-26 (+150d) |
| RHD4CSTL1B07D151096 | uPVC pipes with diameter 25mm. Roof Slab - (B7.22 13 16.02)-STL1-B07-D15 | 2027-07-22 → 2027-12-19 (+150d) | 2027-07-29 → 2027-12-26 (+150d) |
| 203 | **RHD4-02-002-STL1-Electrical Works** | 2027-06-05 → 2027-11-01 (+149d) | 2027-10-03 → 2028-04-16 (+196d) |
| 204 | **RHD4-02-002-STL1-4Cx 6mm2 + 1Cx6mm2 Cu/XLPE/PVC** | 2027-06-05 → 2027-11-01 (+149d) | 2027-06-19 → 2027-11-15 (+149d) |
| RHD4CSTL1B07D161097 | Electrical Conduits and Pull Box Installation for LV Cables 4Cx mm²- (B7.26 05 19.03)-STL1-B07-D16 | 2027-06-05 → 2027-11-01 (+149d) | 2027-06-06 → 2027-11-02 (+149d) |
| RHD4CSTL1B07D161098 | Cable Tray Installation for LV Cables 4Cx mm²- (B7.26 05 19.03)-STL1-B07-D16 | 2027-06-07 → 2027-11-03 (+149d) | 2027-06-09 → 2027-11-06 (+150d) |
| RHD4CSTL1B07D161099 | LV Cable Pulling for LV Cables 4Cx mm²- (B7.26 05 19.03)-STL1-B07-D16 | 2027-06-10 → 2027-11-07 (+150d) | 2027-06-14 → 2027-11-10 (+149d) |
| RHD4CSTL1B07D161100 | LV Cable Termination for LV Cables 4Cx mm²- (B7.26 05 19.03)-STL1-B07-D16 | 2027-06-15 → 2027-11-11 (+149d) | 2027-06-19 → 2027-11-15 (+149d) |
| 205 | **RHD4-02-002-STL1-4Cx 95mm2 + 1Cx50mm2 Cu/XLPE/PVC** | 2027-06-15 → 2027-11-11 (+149d) | 2027-07-03 → 2027-11-29 (+149d) |
| RHD4CSTL1B07D161101 | Electrical Conduits and Pull Box Installation for LV Cables 4Cx95 mm²- (B7.26 05 19.05)-STL1-B07-D16 | 2027-06-15 → 2027-11-11 (+149d) | 2027-06-20 → 2027-11-16 (+149d) |
| RHD4CSTL1B07D161102 | Cable Tray Installation for LV Cables 4Cx95 mm²- (B7.26 05 19.05)-STL1-B07-D16 | 2027-06-21 → 2027-11-17 (+149d) | 2027-06-24 → 2027-11-21 (+150d) |
| RHD4CSTL1B07D161103 | LV Cable Pulling for LV Cables 4Cx95 mm²- (B7.26 05 19.05)-STL1-B07-D16 | 2027-06-26 → 2027-11-22 (+149d) | 2027-06-28 → 2027-11-24 (+149d) |
| RHD4CSTL1B07D161104 | LV Cable Termination for LV Cables 4Cx95 mm²- (B7.26 05 19.05)-STL1-B07-D16 | 2027-06-29 → 2027-11-25 (+149d) | 2027-07-03 → 2027-11-29 (+149d) |
| 206 | **RHD4-02-002-STL1-4Cx 50mm2 + 1Cx25mm2 CU/XLPE / SWA / PVC** | 2027-06-29 → 2027-11-25 (+149d) | 2027-07-15 → 2027-12-12 (+150d) |
| RHD4CSTL1B07D161105 | Electrical Conduits and Pull Box Installation for LV Cables 4Cx6 mm²- (B7.26 05 19.06)-STL1-B07-D16 | 2027-06-29 → 2027-11-25 (+149d) | 2027-07-04 → 2027-11-30 (+149d) |
| RHD4CSTL1B07D161106 | Cable Tray Installation for LV Cables 4Cx6 mm²- (B7.26 05 19.06)-STL1-B07-D16 | 2027-07-05 → 2027-12-01 (+149d) | 2027-07-07 → 2027-12-04 (+150d) |
| RHD4CSTL1B07D161107 | LV Cable Pulling for LV Cables 4Cx6 mm²- (B7.26 05 19.06)-STL1-B07-D16 | 2027-07-08 → 2027-12-05 (+150d) | 2027-07-12 → 2027-12-08 (+149d) |
| RHD4CSTL1B07D161108 | LV Cable Termination for LV Cables 4Cx6 mm²- (B7.26 05 19.06)-STL1-B07-D16 | 2027-07-13 → 2027-12-09 (+149d) | 2027-07-15 → 2027-12-12 (+150d) |
| 207 | **RHD4-02-002-STL1-4Cx 4mm2 + 1Cx4mm2 Cu/XLPE/PVC** | 2027-07-13 → 2027-12-09 (+149d) | 2027-07-28 → 2027-12-25 (+150d) |
| RHD4CSTL1B07D161109 | Electrical Conduits and Pull Box Installation for LV Cables 4Cx4 mm²- (B7.26 05 19.07)-STL1-B07-D16 | 2027-07-13 → 2027-12-09 (+149d) | 2027-07-15 → 2027-12-12 (+150d) |
| RHD4CSTL1B07D161110 | Cable Tray Installation for LV Cables 4Cx4 mm²- (B7.26 05 19.07)-STL1-B07-D16 | 2027-07-17 → 2027-12-13 (+149d) | 2027-07-20 → 2027-12-16 (+149d) |
| RHD4CSTL1B07D161111 | LV Cable Pulling for LV Cables 4Cx4 mm²- (B7.26 05 19.07)-STL1-B07-D16 | 2027-07-21 → 2027-12-18 (+150d) | 2027-07-24 → 2027-12-20 (+149d) |
| RHD4CSTL1B07D161112 | LV Cable Termination for LV Cables 4Cx4 mm²- (B7.26 05 19.07)-STL1-B07-D16 | 2027-07-25 → 2027-12-21 (+149d) | 2027-07-28 → 2027-12-25 (+150d) |
| 208 | **RHD4-02-002-STL1-Wiring Devices** | 2027-07-25 → 2027-12-21 (+149d) | 2027-08-05 → 2028-01-02 (+150d) |
| RHD4CSTL1B07D161113 | 13A Signle Socket Outlet WP for Wiring Devices - (B7.26 27 26 .01)-STL1-B07-D16 | 2027-07-25 → 2027-12-21 (+149d) | 2027-07-28 → 2027-12-25 (+150d) |
| RHD4CSTL1B07D161114 | 13A Double Socket Outlet WP for Wiring Devices - (B7.26 27 26 .02)-STL1-B07-D16 | 2027-07-29 → 2027-12-26 (+150d) | 2027-08-01 → 2027-12-28 (+149d) |
| RHD4CSTL1B07D161115 | 25A Switch Socket Outlet (for Split Unit), WP for Wiring Devices - (B7.26 27 26 .03)-STL1-B07-D16 | 2027-08-02 → 2027-12-29 (+149d) | 2027-08-05 → 2028-01-02 (+150d) |

| ID | Task | Start | Finish |
| --- | --- | --- | --- |
| 209 | **RHD4-02-002-STL1-Grounding and Bonding** | 2027-08-02 → 2027-12-29 (+149d) | 2027-08-21 → 2028-01-17 (+149d) |
| RHD4CSTL1B07D161116 | Copper Conductor Connecting to Steel Rebar Installation for Copper Rods - (B7.26 05 26.03)-STL1-B07-D16 | 2027-08-02 → 2027-12-29 (+149d) | 2027-08-05 → 2028-01-02 (+150d) |
| RHD4CSTL1B07D161117 | Earth pits Installation for Copper Rods - (B7.26 05 26.03)-STL1-B07-D16 | 2027-08-07 → 2028-01-03 (+149d) | 2027-08-11 → 2028-01-08 (+150d) |
| RHD4CSTL1B07D161118 | Earth Bars Installation for Copper Rods - (B7.26 05 26.03)-STL1-B07-D16 | 2027-08-12 → 2028-01-09 (+150d) | 2027-08-16 → 2028-01-12 (+149d) |
| RHD4CSTL1B07D161119 | Copper Tape on Roof Installation for Copper Rods - (B7.26 05 26.03)-STL1-B07-D16 | 2027-08-17 → 2028-01-13 (+149d) | 2027-08-21 → 2028-01-17 (+149d) |
| 210 | **RHD4-02-002-STL1-Indoor Lighting Fixtures** | 2027-08-17 → 2028-01-13 (+149d) | 2027-09-13 → 2028-02-09 (+149d) |
| RHD4CSTL1B07D161120 | Electrical Conduits and Pull Box Installation - 24.5 W for Lighting Fixtures - (B7.26 51 00.01)-STL1-B07-D16 | 2027-08-17 → 2028-01-13 (+149d) | 2027-08-22 → 2028-01-18 (+149d) |
| RHD4CSTL1B07D161121 | LV Cable Pulling for Lighting Fixtures - (B7.26 51 00.01)-STL1-B07-D16 | 2027-08-23 → 2028-01-19 (+149d) | 2027-08-26 → 2028-01-23 (+150d) |
| RHD4CSTL1B07D161122 | Lighting Fixture Installation for Lighting Fixtures - (B7.26 51 00.01)-STL1-B07-D16 | 2027-08-28 → 2028-01-24 (+149d) | 2027-08-31 → 2028-01-27 (+149d) |
| RHD4CSTL1B07D161123 | Electrical Conduits and Pull Box Installation - 8 W for Lighting Fixtures - (B7.26 51 00.02)-STL1-B07-D16 | 2027-09-01 → 2028-01-29 (+150d) | 2027-09-04 → 2028-01-31 (+149d) |
| RHD4CSTL1B07D161124 | LV Cable Pulling for Lighting Fixtures - (B7.26 51 00.02)-STL1-B07-D16 | 2027-09-05 → 2028-02-01 (+149d) | 2027-09-07 → 2028-02-03 (+149d) |
| RHD4CSTL1B07D161125 | Lighting Fixture Installation for Lighting Fixtures - (B7.26 51 00.02)-STL1-B07-D16 | 2027-09-08 → 2028-02-05 (+150d) | 2027-09-13 → 2028-02-09 (+149d) |
| 211 | **RHD4-02-002-STL1-Outdoor Lighting Fixtures** | 2027-07-25 → 2027-12-21 (+149d) | 2027-08-19 → 2028-01-16 (+150d) |
| RHD4CSTL1B07D161126 | Electrical Conduits and Pull Box Installation - 7 W for Lighting Fixtures - (B7.26 56 00.01)-STL1-B07-D16 | 2027-07-25 → 2027-12-21 (+149d) | 2027-07-26 → 2027-12-22 (+149d) |
| RHD4CSTL1B07D161127 | LV Cable Pulling for Lighting Fixtures - (B7.26 56 00.01)-STL1-B07-D16 | 2027-07-27 → 2027-12-23 (+149d) | 2027-07-29 → 2027-12-26 (+150d) |
| RHD4CSTL1B07D161128 | Lighting Fixture Installation for Lighting Fixtures - (B7.26 56 00.01)-STL1-B07-D16 | 2027-07-31 → 2027-12-27 (+149d) | 2027-08-03 → 2027-12-30 (+149d) |
| RHD4CSTL1B07D161129 | Electrical Conduits and Pull Box Installation - 42.5 W for Lighting Fixtures - (B7.26 56 00.02)-STL1-B07-D16 | 2027-08-04 → 2028-01-01 (+150d) | 2027-08-08 → 2028-01-04 (+149d) |
| RHD4CSTL1B07D161130 | LV Cable Pulling for Lighting Fixtures - (B7.26 56 00.02)-STL1-B07-D16 | 2027-08-09 → 2028-01-05 (+149d) | 2027-08-14 → 2028-01-10 (+149d) |
| RHD4CSTL1B07D161131 | Lighting Fixture Installation for Lighting Fixtures - (B7.26 56 00.02)-STL1-B07-D16 | 2027-08-15 → 2028-01-11 (+149d) | 2027-08-19 → 2028-01-16 (+150d) |
| 212 | **RHD4-02-002-STL1- Enclosed Switches and Circuit Breakers** | 2027-08-15 → 2028-01-11 (+149d) | 2027-08-28 → 2028-01-24 (+149d) |
| RHD4CSTL1B07D161132 | 25-amp single-pole disconnect switches for Lighting Fixtures - (B7.26 28 16.01)-STL1-B07-D16 | 2027-08-15 → 2028-01-11 (+149d) | 2027-08-21 → 2028-01-17 (+149d) |
| RHD4CSTL1B07D161133 | 25-amp three-pole disconnect switches for Lighting Fixtures - (B7.26 28 16.02)-STL1-B07-D16 | 2027-08-22 → 2028-01-18 (+149d) | 2027-08-28 → 2028-01-24 (+149d) |
| 213 | **RHD4-02-002-STL1-Secondery Panel Boards** | 2027-08-22 → 2028-01-18 (+149d) | 2027-09-02 → 2028-01-30 (+150d) |
| RHD4CSTL1B07D161136 | Panel "LPP-UT5" Installation for Panelboards - (B7.26 24 16.06)-STL1-B07-D16 | 2027-08-22 → 2028-01-18 (+149d) | 2027-08-26 → 2028-01-23 (+150d) |
| RHD4CSTL1B07D161137 | Panel "DB-UT5" Termination for Panelboards - (B7.26 24 16.06)-STL1-B07-D16 | 2027-08-28 → 2028-01-24 (+149d) | 2027-09-02 → 2028-01-30 (+150d) |
| 214 | **RHD4-02-002-STL1-Addressable Fire-Alarm System** | 2027-08-17 → 2028-01-13 (+149d) | 2027-09-15 → 2028-02-12 (+150d) |
| RHD4CSTL1B07D161138 | 2 loop FACP with charger, battries and auto dialer for Fire Alarm - (B7.28 46 00.02)-STL1-B07-D16 | 2027-08-17 → 2028-01-13 (+149d) | 2027-08-21 → 2028-01-17 (+149d) |
| RHD4CSTL1B07D161139 | Addressable type fire alarm Photoelectric smoke detector complete base for Fire Alarm - (B7.28 46 00.04)-STL1-B07-D16 | 2027-08-22 → 2028-01-18 (+149d) | 2027-08-25 → 2028-01-22 (+150d) |
| RHD4CSTL1B07D161140 | Addressable type fire alarm manual call station/pull station for Fire Alarm - (B7.28 46 00.05)-STL1-B07-D16 | 2027-08-26 → 2028-01-23 (+150d) | 2027-08-30 → 2028-01-26 (+149d) |
| RHD4CSTL1B07D161141 | Addressable type fire alarm manual call station/pull station for Fire Alarm - (B7.28 46 00.06)-STL1-B07-D16 | 2027-08-31 → 2028-01-27 (+149d) | 2027-09-01 → 2028-01-29 (+150d) |
| RHD4CSTL1B07D161142 | Conventional 24V DC fire alarm wall mounted 15cd flasher/strobe. for Fire Alarm - (B7.28 46 00.07)-STL1-B07-D16 | 2027-09-02 → 2028-01-30 (+150d) | 2027-09-05 → 2028-02-01 (+149d) |
| RHD4CSTL1B07D161143 | Conventional 24V DC fire alarm wall mounted 15cd weather proof for Fire Alarm - (B7.28 46 00.08)-STL1-B07-D16 | 2027-09-06 → 2028-02-02 (+149d) | 2027-09-08 → 2028-02-05 (+150d) |
| RHD4CSTL1B07D161144 | Short CCT Isolator. for Fire Alarm - (B7.28 46 00.09)-STRM1-B07-D16 | 2027-09-09 → 2028-02-06 (+150d) | 2027-09-11 → 2028-02-07 (+149d) |
| RHD4CSTL1B07D161145 | Addressable Control module. for Fire Alarm - (B7.28 46 00.10)-STL1-B07-D16 | 2027-09-12 → 2028-02-08 (+149d) | 2027-09-15 → 2028-02-12 (+150d) |
| 215 | **RHD4-02-002-STL1-Main Motor Control Center (MCC)** | 2027-08-22 → 2028-01-18 (+149d) | 2027-09-02 → 2028-01-30 (+150d) |
| RHD4CSTL1B07D161151 | Installation for MCC-8 - (B7.26 29 00.03)-STL1-B07-D16 | 2027-08-22 → 2028-01-18 (+149d) | 2027-08-28 → 2028-01-24 (+149d) |
| RHD4CSTL1B07D161152 | Termination for MCC-8 - (B7.26 29 00.03)-STL1-B07-D16 | 2027-08-29 → 2028-01-25 (+149d) | 2027-09-02 → 2028-01-30 (+150d) |
| 216 | **RHD4-02-002-STL1-Programmable Logic Controllers** | 2027-09-14 → 2028-03-29 (+197d) | 2027-10-03 → 2028-04-16 (+196d) |
| RHD4CSTL1B07D161153 | PLC System Installation for - (B7.40 63 43.01)-STL1-B07-D16 | 2027-09-14 → 2028-03-29 (+197d) | 2027-09-20 → 2028-04-04 (+197d) |
| RHD4CSTL1B07D161154 | Process Control Wiring Installation for - (B7.40 67 10.01)-STL1-B07-D16 | 2027-09-21 → 2028-04-05 (+197d) | 2027-09-27 → 2028-04-10 (+196d) |
| RHD4CSTL1B07D161155 | Instrumentation for Process Systems for - (B7.40 70 00.01)-STL1-B07-D16 | 2027-09-28 → 2028-04-11 (+196d) | 2027-10-03 → 2028-04-16 (+196d) |
| 217 | **RHD4-02-002-Storm Lift Station 01-Site Works** | 2027-07-31 → 2027-12-27 (+149d) | 2027-10-21 → 2028-05-08 (+200d) |
| 218 | **RHD4-02-002-STL1-FLOW METER CHAMABER** | 2027-07-31 → 2027-12-27 (+149d) | 2027-09-27 → 2028-02-23 (+149d) |
| 219 | **RHD4-02-002-STL1-Concrete works** | 2027-07-31 → 2027-12-27 (+149d) | 2027-08-18 → 2028-01-15 (+150d) |
| RHD4CSTL1B07D031156 | Lean Concrete Plain Concrete - (B7.03 00 00 .01)-STL1-B07-D03 | 2027-07-31 → 2027-12-27 (+149d) | 2027-08-01 → 2027-12-28 (+149d) |
| RHD4CSTL1B07D031157 | Water proofing membrance Bituminous Sheet - (B7.07 13 13.01)-STL1-B07-D03 | 2027-08-02 → 2027-12-29 (+149d) | 2027-08-04 → 2028-01-01 (+150d) |
| RHD4CSTL1B07D031158 | Screed 50mm - (B7.03 00 00 .04)-STL1-B07-D03 | 2027-08-05 → 2028-01-02 (+150d) | 2027-08-07 → 2028-01-03 (+149d) |
| RHD4CSTL1B07D031159 | Steel Fixing - (B7.03 00 00 .04)-STL1-B07-D03 | 2027-08-08 → 2028-01-04 (+149d) | 2027-08-11 → 2028-01-08 (+150d) |
| RHD4CSTL1B07D031160 | Formwork - (B7.03 00 00 .04)-STL1-B07-D03 | 2027-08-12 → 2028-01-09 (+150d) | 2027-08-16 → 2028-01-12 (+149d) |
| RHD4CSTL1B07D031161 | RC Casting Fluid-Applied - (B7.03 00 00 .04)-STL1-B07-D03 | 2027-08-17 → 2028-01-13 (+149d) | 2027-08-18 → 2028-01-15 (+150d) |
| 220 | **RHD4-02-002-STL1-Retaining Walls & Slab** | 2027-08-19 → 2028-01-16 (+150d) | 2027-09-02 → 2028-01-30 (+150d) |
| RHD4CSTL1B07D031162 | Steel Fixing - (B7.03 00 00 .07)-STL1-B07-D03 | 2027-08-19 → 2028-01-16 (+150d) | 2027-08-23 → 2028-01-19 (+149d) |
| RHD4CSTL1B07D031163 | Formwork - (B7.03 00 00 .07)-STL1-B07-D03 | 2027-08-24 → 2028-01-20 (+149d) | 2027-08-26 → 2028-01-23 (+150d) |
| RHD4CSTL1B07D031164 | RC Casting - (B7.03 00 00 .07)-STL1-B07-D03 | 2027-08-28 → 2028-01-24 (+149d) | 2027-08-31 → 2028-01-27 (+149d) |
| RHD4CSTL1B07D031165 | Water protection Board membrance Fluid-Applied - (B7.03 00 00 .07)-STL1-B07-D03 | 2027-09-01 → 2028-01-29 (+150d) | 2027-09-02 → 2028-01-30 (+150d) |
| 221 | **RHD4-02-002-STL1-Metal Floor Door** | 2027-09-04 → 2028-01-31 (+149d) | 2027-09-08 → 2028-02-05 (+150d) |
| RHD4CSTL1B07D021166 | Installation of metal door size (600x600mm) - (B7.08 31 13.01)-STL1-B07-D02 | 2027-09-04 → 2028-01-31 (+149d) | 2027-09-08 → 2028-02-05 (+150d) |
| 222 | **RHD4-02-002-STL1-Magnetic type flowmeter Installation** | 2027-09-09 → 2028-02-06 (+150d) | 2027-09-27 → 2028-02-23 (+149d) |
| RHD4CSTL1B07D151167 | Flow meter installation 150mm - (B7.22 05 19.03)-STL1-B07-D15 | 2027-09-09 → 2028-02-06 (+150d) | 2027-09-14 → 2028-02-10 (+149d) |
| RHD4CSTL1B07D151168 | UPVC Conduits 1 inch UPVC - (B7.22 05 19.03)-STL1-B07-D15 | 2027-09-15 → 2028-02-12 (+150d) | 2027-09-19 → 2028-02-15 (+149d) |
| RHD4CSTL1B07D151169 | Electrical power and cable connection - (B7.22 05 19.03)-STL1-B07-D15 | 2027-09-20 → 2028-02-16 (+149d) | 2027-09-22 → 2028-02-19 (+150d) |
| RHD4CSTL1B07D151170 | Flow meter Panel Integration and connection - (B7.22 05 19.03)-STL1-B07-D15 | 2027-09-25 → 2028-02-20 (+148d) | 2027-09-27 → 2028-02-23 (+149d) |
| 223 | **RHD4-02-002-STL1-GENERATOR FOUNDATION** | 2027-08-02 → 2027-12-29 (+149d) | 2027-10-21 → 2028-05-08 (+200d) |
| 224 | **RHD4-02-002-STL1-GENERATOR FOUNDATION-Concrete works** | 2027-08-02 → 2027-12-29 (+149d) | 2027-08-28 → 2028-01-24 (+149d) |
| RHD4CSTL1B07D031171 | Lean Concrete Plain Concrete - (B7.03 00 00 .01)-STL1-B07-D03 | 2027-08-02 → 2027-12-29 (+149d) | 2027-08-03 → 2027-12-30 (+149d) |
| RHD4CSTL1B07D031172 | Water proofing membrance Bituminous Sheet - (B7.07 13 13.01)-STL1-B07-D03 | 2027-08-04 → 2028-01-01 (+150d) | 2027-08-07 → 2028-01-03 (+149d) |
| RHD4CSTL1B07D031173 | Screed 50mm - (B7.03 00 00 .04)-STL1-B07-D03 | 2027-08-08 → 2028-01-04 (+149d) | 2027-08-11 → 2028-01-08 (+150d) |
| RHD4CSTL1B07D031174 | Steel Fixing - (B7.03 00 00 .04)-STL1-B07-D03 | 2027-08-12 → 2028-01-09 (+150d) | 2027-08-16 → 2028-01-12 (+149d) |
| RHD4CSTL1B07D031175 | Formwork - (B7.03 00 00 .04)-STL1-B07-D03 | 2027-08-17 → 2028-01-13 (+149d) | 2027-08-22 → 2028-01-18 (+149d) |
| RHD4CSTL1B07D031176 | RC Casting - (B7.03 00 00 .04)-STL1-B07-D03 | 2027-08-23 → 2028-01-19 (+149d) | 2027-08-28 → 2028-01-24 (+149d) |

| ID | Task | Start | Finish | Duration | Complete | Predecessors | Other |
| --- | --- | --- | --- | --- | --- | --- | --- |
| 225 | **RHD4-02-002-STL1-Standby Diesel Generator** | 2027-08-29 → 2028-01-25 (+149d) | 2027-10-21 → 2028-05-08 (+200d) |  |  |  |  |
| RHD4CSTL1B07D151177 | Standby Diesel Generator Set 150 KVA - Installation 100kva - (B7.26 32 12.05)-STL1-B07-D15 | 2027-08-29 → 2028-01-25 (+149d) | 2027-09-01 → 2028-01-29 (+150d) |  |  |  |  |
| RHD4CSTL1B07D151178 | Automatic Transfer Switch ATS panel 300A - Installation 160A - (B7.26 32 12.06)-STL1-B07-D15 | 2027-09-02 → 2028-01-30 (+150d) | 2027-09-06 → 2028-02-02 (+149d) |  |  |  |  |
| RHD4CSTL1B07D151179 | Lean Concrete Plain Concrete - (B7.03 00 00 .01)-STL1-B07-D15 | 2027-09-07 → 2028-02-03 (+149d) | 2027-09-12 → 2028-02-08 (+149d) |  |  |  |  |
| RHD4CSTL1B07D151180 | Water proofing membrance Bituminous Sheet - (B7.07 13 13.01)-STL1-B07-D15 | 2027-09-28 → 2028-04-11 (+196d) | 2027-10-03 → 2028-04-16 (+196d) |  |  |  |  |
| RHD4CSTL1B07D151181 | Screed 50mm - (B7.03 00 00 .04)-STL1-B07-D15 | 2027-10-04 → 2028-04-17 (+196d) | 2027-10-06 → 2028-04-19 (+196d) |  |  |  |  |
| RHD4CSTL1B07D151182 | Steel Fixing - (B7.03 00 00 .05)-STL1-B07-D15 | 2027-10-07 → 2028-04-20 (+196d) | 2027-10-11 → 2028-04-24 (+196d) |  |  |  |  |
| RHD4CSTL1B07D151183 | Formwork - (B7.03 00 00 .05)-STL1-B07-D15 | 2027-10-12 → 2028-04-25 (+196d) | 2027-10-14 → 2028-04-27 (+196d) |  |  |  |  |
| RHD4CSTL1B07D151184 | RC Casting - (B7.03 00 00 .05)-STL1-B07-D15 | 2027-10-16 → 2028-04-29 (+196d) | 2027-10-18 → 2028-05-01 (+196d) |  |  |  |  |
| RHD4CSTL1B07D151185 | Water protection Board membrance Fluid-Applied - (B7.07 13 13.01)-STL1-B07-D15 | 2027-10-19 → 2028-05-02 (+196d) | 2027-10-21 → 2028-05-08 (+200d) |  |  |  |  |
| 4 | **Sewage Lift Station 01** | 2026-12-06 → 2026-10-20 (-47d) | 2027-09-18 → 2028-04-17 (+212d) |  |  |  |  |
| 20 | **RHD4-02-002-Sewage Lift Station 01-Electrical Room** | 2026-12-17 → 2026-10-20 (-58d) | 2027-09-04 → 2028-04-03 (+212d) |  |  |  |  |
| 21 | **RHD4-02-002-SWL1-B07-Sub Structure** | 2026-12-17 → 2026-10-20 (-58d) | 2027-05-12 → 2027-12-11 (+213d) |  |  |  |  |
| 22 | **RHD4-02-002-SWL1-B07-Electrical Room-Plain Concrete** | 2026-12-17 → 2026-10-20 (-58d) | 2026-12-22 → 2027-06-09 (+169d) |  |  |  |  |
| RHD4CSWL1B07D031035 | Shuttering Plain Concrete for Electrical Room - (B7.03 00 00 .01)-SWL1-B07-D03 | 2026-12-17 → 2026-10-20 A (-58d) | 2026-12-20 → 2026-10-22 A (-59d) |  | 0% → 100% |  |  |
| RHD4CSWL1B07D031036 | Lean Concrete Plain Concrete for Electrical Room - (B7.03 00 00 .01)-SWL1-B07-D03 | 2026-12-21 → 2027-06-08 (+169d) | 2026-12-22 → 2027-06-09 (+169d) |  |  |  |  |
| 23 | **RHD4-02-002-SWL1-B07-Electrical Room-Footing / Foundation** | 2026-12-23 → 2027-06-10 (+169d) | 2027-01-05 → 2027-07-18 (+194d) |  |  |  |  |
| RHD4CSWL1B07D031037 | Shuttering Foundation for Electrical Room - (B7.03 00 00 .05)-SWL1-B07-D03 | 2026-12-23 → 2027-06-10 (+169d) | 2026-12-26 → 2027-06-13 (+169d) |  |  |  |  |
| RHD4CSWL1B07D031038 | Steel Fixing Foundation for Electrical Room - (B7.03 00 00 .05)-SWL1-B07-D03 | 2026-12-27 → 2027-07-08 (+193d) | 2026-12-30 → 2027-07-12 (+194d) |  |  |  |  |
| RHD4CSWL1B07D031039 | RC Casting Foundation for Electrical Room - (B7.03 00 00 .05)-SWL1-B07-D03 | 2026-12-31 → 2027-07-13 (+194d) | 2027-01-02 → 2027-07-14 (+193d) |  |  |  | resources Supply and cast in place reinforced concrete with fc'=31 Mpa for the sub- structures for (Sewer and Storm Pump station) and (tunnels) for Footings [2.49 m3]; Unskilled Labor [4.03 h]; RIC Machine [2.5 h]; Concrete Mixer Truck [1.31 h]; Concrete Pump [1.31 h] → Supply and cast in place reinforced concrete with fc'=31 Mpa for the sub- structures for (Sewer and Storm Pump station) and (tunnels) for Footings [2.49 m3]; Unskilled Labor [4 h]; RIC Machine [2.5 h]; Concrete Mixer Truck [1.31 h]; Concrete Pump [1.31 h] |
| RHD4CSWL1B07D031040 | Deshuttering Foundation for Electrical Room - (B7.03 00 00 .05)-SWL1-B07-D03 | 2027-01-03 → 2027-07-15 (+193d) | 2027-01-05 → 2027-07-18 (+194d) |  |  |  |  |
| 24 | **RHD4-02-002-SWL1-B07-Electrical Room-Neck Column** | 2027-01-06 → 2027-07-20 (+195d) | 2027-01-20 → 2027-08-15 (+207d) |  |  |  |  |
| RHD4CSWL1B07D031041 | Steel Fixing for Neck Column for Electrical Room - (B7.03 00 00 .06)-SWL1-B07-D03 | 2027-01-06 → 2027-07-20 (+195d) | 2027-01-09 → 2027-07-22 (+194d) |  |  |  |  |
| RHD4CSWL1B07D031042 | Shuttering for Neck Column for Electrical Room - (B7.03 00 00 .06)-SWL1-B07-D03 | 2027-01-10 → 2027-07-24 (+195d) | 2027-01-13 → 2027-07-27 (+195d) |  |  |  |  |
| RHD4CSWL1B07D031043 | RC Casting for Neck Column for Electrical Room - (B7.03 00 00 .06)-SWL1-B07-D03 | 2027-01-14 → 2027-07-28 (+195d) | 2027-01-17 → 2027-07-29 (+193d) | 3d → 2d |  |  |  |
| RHD4CSWL1B07D031044 | Deshuttering for Neck Column for Electrical Room - (B7.03 00 00 .06)-SWL1-B07-D03 | 2027-01-18 → 2027-08-12 (+206d) | 2027-01-20 → 2027-08-15 (+207d) |  |  |  |  |
| 25 | **RHD4-02-002-SWL1-B07-Electrical Room-Ground Beams** | 2027-01-21 → 2027-08-16 (+207d) | 2027-02-03 → 2027-08-30 (+208d) |  |  |  |  |
| RHD4CSWL1B07D031045 | Steel Fixing for Ground Beams for Electrical Room - (B7.03 00 00 .08)-SWL1-B07-D03 | 2027-01-21 → 2027-08-16 (+207d) | 2027-01-24 → 2027-08-18 (+206d) |  |  |  |  |
| RHD4CSWL1B07D031046 | Shuttering for Ground Beams for Electrical Room - (B7.03 00 00 .08)-SWL1-B07-D03 | 2027-01-25 → 2027-08-19 (+206d) | 2027-01-28 → 2027-08-23 (+207d) |  |  |  |  |
| RHD4CSWL1B07D031047 | RC Casting for Ground Beams for Electrical Room - (B7.03 00 00 .08)-SWL1-B07-D03 | 2027-01-30 → 2027-08-25 (+207d) | 2027-01-31 → 2027-08-26 (+207d) |  |  |  |  |
| RHD4CSWL1B07D031048 | Deshuttering for Ground Beams for Electrical Room - (B7.03 00 00 .08)-SWL1-B07-D03 | 2027-02-01 → 2027-08-28 (+208d) | 2027-02-03 → 2027-08-30 (+208d) |  |  |  |  |
| 26 | **RHD4-02-002-SWL1-B07-Electrical Room-Aggregate base Course** | 2027-02-04 → 2027-08-31 (+208d) | 2027-02-11 → 2027-09-07 (+208d) |  |  |  |  |
| RHD4CSWL1B07D031049 | Laying Aggregate base course Slab on Grade - (B7.32 11 23.01)-SWL1-B07-D03 | 2027-02-04 → 2027-08-31 (+208d) | 2027-02-08 → 2027-09-04 (+208d) |  |  |  |  |
| RHD4CSWL1B07D031050 | Compaction Slab on Grade - (B7.32 11 23.01)-SWL1-B07-D03 | 2027-02-09 → 2027-09-05 (+208d) | 2027-02-11 → 2027-09-07 (+208d) |  |  |  |  |
| 27 | **RHD4-02-002-SWL1-B07-Electrical Room-Slab on Grade** | 2027-02-13 → 2027-09-08 (+207d) | 2027-03-07 → 2027-10-02 (+209d) |  |  |  |  |
| RHD4CSWL1B07D031051 | Screeding for SOG works Slab on Grade for Electrical Room - (B7.03 00 00 .02)-SWL1-B07-D03 | 2027-02-13 → 2027-09-08 (+207d) | 2027-02-16 → 2027-09-12 (+208d) |  |  | RHD4CSWL1B07D031050, RHD4CZ3L122SW3500, RHD4CZ2L102IRR3200, RHD4CZ7C02ST3500, RHD4CZ2L102ST4600, RHD4CZ4L09PT4500, RHD4CZ4C012IRR1504 → RHD4CSWL1B07D031050, RHD4CZ3L122SW3500, RHD4CZ2L102IRR3200, RHD4CZ7C02ST3500, RHD4CZ2L102ST4600 |  |
| RHD4CSWL1B07D031052 | Shuttering for Slab on Grade for Electrical Room - (B7.03 00 00 .09)-SWL1-B07-D03 | 2027-02-17 → 2027-09-13 (+208d) | 2027-02-23 → 2027-09-18 (+207d) |  |  |  |  |
| RHD4CSWL1B07D031053 | Steel Fixing for Slab on Grade for Electrical Room - (B7.03 00 00 .09)-SWL1-B07-D03 | 2027-02-24 → 2027-09-20 (+208d) | 2027-03-01 → 2027-09-26 (+209d) |  |  |  |  |
| RHD4CSWL1B07D031054 | RC Casting for Slab on Grade for Electrical Room - (B7.03 00 00 .09)-SWL1-B07-D03 | 2027-03-02 → 2027-09-27 (+209d) | 2027-03-03 → 2027-09-28 (+209d) |  |  |  |  |
| RHD4CSWL1B07D031055 | Deshuttering for Slab on Grade for Electrical Room - (B7.03 00 00 .09)-SWL1-B07-D03 | 2027-03-04 → 2027-09-29 (+209d) | 2027-03-07 → 2027-10-02 (+209d) |  |  |  |  |
| 28 | **RHD4-02-002-SWL1-B07-Electrical Room-Fluid-Applied Waterproofing** | 2027-03-08 → 2027-10-03 (+209d) | 2027-03-15 → 2027-10-06 (+205d) |  |  |  |  |
| RHD4CSWL1B07D071056 | 2 coats of bitumen on Grade Beams and SOW Slab on Grade - (B7.07 14 00.01)-SWL1-B07-D07 | 2027-03-08 → 2027-10-03 (+209d) | 2027-03-15 → 2027-10-06 (+205d) |  |  |  | resources Fluid-Applied Waterproofing (2 coats of bitumen waterproofing paint for slab on grade and ground beams) [10.28 m2]; Carpenter [133.95 h]; Unskilled Labor [19.17 h] → Fluid-Applied Waterproofing (2 coats of bitumen waterproofing paint for slab on grade and ground beams) [10.28 m2]; Carpenter [133.95 h]; Unskilled Labor [19.2 h] |
| 29 | **RHD4-02-002-SWL1-B07-Electrical Room-Vapor Retarders** | 2027-03-16 → 2027-10-07 (+205d) | 2027-03-18 → 2027-10-10 (+206d) |  |  |  |  |
| RHD4CSWL1B07D071057 | 250 micron Polyethylene sheet Slab on Grade - (B7.07 26 16.01)-SWL1-B07-D07 | 2027-03-16 → 2027-10-07 (+205d) | 2027-03-18 → 2027-10-10 (+206d) |  |  |  |  |
| 30 | **RHD4-02-002-SWL1-B07-Electrical Room-Columns** | 2027-03-20 → 2027-10-12 (+206d) | 2027-04-04 → 2027-11-02 (+212d) |  |  |  |  |
| RHD4CSWL1B07D031058 | Shuttering for Columns for Electrical Room - (B7.03 00 00 .13)-SWL1-B07-D03 | 2027-03-20 → 2027-10-12 (+206d) | 2027-03-24 → 2027-10-17 (+207d) |  |  |  |  |
| RHD4CSWL1B07D031059 | Steel Fixing for Columns for Electrical Room - (B7.03 00 00 .13)-SWL1-B07-D03 | 2027-03-25 → 2027-10-18 (+207d) | 2027-03-28 → 2027-10-20 (+206d) |  |  |  |  |
| RHD4CSWL1B07D031060 | RC Casting for Columns for Electrical Room - (B7.03 00 00 .13)-SWL1-B07-D03 | 2027-03-29 → 2027-10-27 (+212d) | 2027-03-30 → 2027-10-28 (+212d) |  |  |  |  |
| RHD4CSWL1B07D031061 | Deshuttering for Columns for Electrical Room - (B7.03 00 00 .13)-SWL1-B07-D03 | 2027-03-31 → 2027-10-30 (+213d) | 2027-04-04 → 2027-11-02 (+212d) |  |  |  |  |
| 31 | **RHD4-02-002-SWL1-B07-Electrical Room-Beams** | 2027-04-05 → 2027-11-03 (+212d) | 2027-04-28 → 2027-11-27 (+213d) |  |  |  |  |
| RHD4CSWL1B07D031062 | Shuttering for Roof Beams for Electrical Room - (B7.03 00 00 .14)-SWL1-B07-D03 | 2027-04-05 → 2027-11-03 (+212d) | 2027-04-11 → 2027-11-09 (+212d) |  |  |  |  |
| RHD4CSWL1B07D031063 | Steel Fixing for Roof Beams for Electrical Room - (B7.03 00 00 .14)-SWL1-B07-D03 | 2027-04-12 → 2027-11-10 (+212d) | 2027-04-20 → 2027-11-18 (+212d) |  |  |  |  |
| RHD4CSWL1B07D031064 | RC Casting for Roof Beams for Electrical Room - (B7.03 00 00 .14)-SWL1-B07-D03 | 2027-04-21 → 2027-11-20 (+213d) | 2027-04-25 → 2027-11-23 (+212d) |  |  |  |  |
| RHD4CSWL1B07D031065 | Deshuttering for Roof Beams for Electrical Room - (B7.03 00 00 .14)-SWL1-B07-D03 | 2027-04-26 → 2027-11-24 (+212d) | 2027-04-28 → 2027-11-27 (+213d) |  |  |  |  |
| 32 | **RHD4-02-002-SWL1-B07-Electrical Room-Roof Slab** | 2027-04-29 → 2027-11-28 (+213d) | 2027-05-12 → 2027-12-11 (+213d) |  |  |  |  |
| RHD4CSWL1B07D031066 | Shuttering for Roof Slab for Electrical Room - (B7.03 00 00 .15)-SWL1-B07-D03 | 2027-04-29 → 2027-11-28 (+213d) | 2027-05-02 → 2027-11-30 (+212d) |  |  |  |  |
| RHD4CSWL1B07D031067 | Steel Fixing for Roof Slab for Electrical Room - (B7.03 00 00 .15)-SWL1-B07-D03 | 2027-05-03 → 2027-12-01 (+212d) | 2027-05-06 → 2027-12-05 (+213d) |  |  | RHD4CSWL1B07D031066, RHD4CZ7L03IRR3202, RHD4CZ4C012RD7100, RHD4CZ5C061RD7100, RHD4CZ4BZ4EX1001, RHD4CZ3L122SL5200, RHD4CZ4A013RD4100, RHD4CZ5C061RD8100, RHD4CZ9L02TC5200 → RHD4CSWL1B07D031066, RHD4CZ7L03IRR3202, RHD4CZ5C061RD7100, RHD4CZ4BZ4EX1001, RHD4CZ3L122SL5200, RHD4CZ4A013RD4100, RHD4CZ5C061RD8100, RHD4CZ9L02TC5200 | resources Supply and cast in place reinforced concrete with fc'=31 Mpa for the Super- structures for (Sewer and Storm Pump station) for Solid Slabs [4.65 m3]; Unskilled Labor [39.1 h]; Steel Fixer [208.77 h] → Supply and cast in place reinforced concrete with fc'=31 Mpa for the Super- structures for (Sewer and Storm Pump station) for Solid Slabs [4.65 m3]; Unskilled Labor [39.1 h]; Steel Fixer [208.8 h] |
| RHD4CSWL1B07D031068 | RC Casting for Roof Slab for Electrical Room - (B7.03 00 00 .15)-SWL1-B07-D03 | 2027-05-08 → 2027-12-06 (+212d) | 2027-05-09 → 2027-12-07 (+212d) |  |  |  |  |
| RHD4CSWL1B07D031069 | Deshuttering for Roof Slab for Electrical Room - (B7.03 00 00 .15)-SWL1-B07-D03 | 2027-05-10 → 2027-12-08 (+212d) | 2027-05-12 → 2027-12-11 (+213d) |  |  |  |  |
| 33 | **RHD4-02-002-SWL1-B07-Finishes** | 2027-05-13 → 2027-12-12 (+213d) | 2027-07-03 → 2028-01-26 (+207d) |  |  |  |  |
| 34 | **RHD4-02-002-SWL1-B07-Finishes-Masonary** | 2027-05-13 → 2027-12-12 (+213d) | 2027-05-23 → 2027-12-16 (+207d) |  |  |  |  |
| RHD4CSWL1B07D091070 | Masonary Block work (CMU walls) Insulated Block Work - (B7.04 22 00.01)-SWL1-B07-D09 | 2027-05-13 → 2027-12-12 (+213d) | 2027-05-23 → 2027-12-16 (+207d) |  |  |  |  |
| 35 | **RHD4-02-002-SWL1-B07-Finishes-Roofs waterproofing system** | 2027-05-13 → 2027-12-12 (+213d) | 2027-06-08 → 2028-01-02 (+208d) |  |  |  |  |
| RHD4CSWL1B07D071071 | 250 micron Polyethylene sheet - (B7.07 00 00.06)-SWL1-B07-D07 | 2027-05-13 → 2027-12-12 (+213d) | 2027-05-19 → 2027-12-13 (+208d) |  |  |  |  |
| RHD4CSWL1B07D071072 | 50 mm thick minimum Foam Concrete - (B7.07 00 00.05)-SWL1-B07-D07 | 2027-05-20 → 2027-12-14 (+208d) | 2027-05-23 → 2027-12-16 (+207d) |  |  |  |  |
| RHD4CSWL1B07D071073 | 30 mm thick Screed Concrete - (B7.07 00 00.04)-SWL1-B07-D07 | 2027-05-24 → 2027-12-18 (+208d) | 2027-05-26 → 2027-12-20 (+208d) |  |  |  |  |
| RHD4CSWL1B07D071074 | 4 mm thick Waterproofing Bituminous Membrane - (B7.07 00 00.03)-SWL1-B07-D07 | 2027-05-27 → 2027-12-21 (+208d) | 2027-05-30 → 2027-12-23 (+207d) |  |  |  |  |
| RHD4CSWL1B07D071075 | Geotextile Membrane - (B7.07 00 00.02)-SWL1-B07-D07 | 2027-05-31 → 2027-12-25 (+208d) | 2027-06-03 → 2027-12-28 (+208d) |  |  |  |  |
| RHD4CSWL1B07D071076 | 50 mm thick Gravel Toppings - (B7.07 00 00.01)-SWL1-B07-D07 | 2027-06-05 → 2027-12-29 (+207d) | 2027-06-08 → 2028-01-02 (+208d) |  |  |  |  |
| 36 | **RHD4-02-002-SWL1-B07-Finishes-Manufactured Copings** | 2027-06-05 → 2027-12-29 (+207d) | 2027-06-09 → 2028-01-03 (+208d) |  |  |  |  |

| ID | Task | Start | Finish | Duration | Other |
| --- | --- | --- | --- | --- | --- |
| RHD4CSWL1B07D091077 | Supply and install Stone coping 40mm thickness Insulated Block Work - (B7.07 71 13.01)-SWL1-B07-D09 | 2027-06-05 → 2027-12-29 (+207d) | 2027-06-09 → 2028-01-03 (+208d) |  |  |
| 38 | **RHD4-02-002-SWL1-B07-Finishes-Cement Plastering** | 2027-06-05 → 2027-12-29 (+207d) | 2027-06-09 → 2028-01-03 (+208d) |  |  |
| RHD4CSWL1B07D091079 | Internal Plastering For Walls 15mm - (B7.09 24 00.01)-SWL1-B07-D09 | 2027-06-05 → 2027-12-29 (+207d) | 2027-06-09 → 2028-01-03 (+208d) |  |  |
| RHD4CSWL1B07D091080 | External Plastering for walls 20mm - (B7.09 24 00.02)-SWL1-B07-D09 | 2027-06-05 → 2027-12-29 (+207d) | 2027-06-09 → 2028-01-03 (+208d) |  |  |
| 39 | **RHD4-02-002-SWL1-B07-Finishes-Metal Ladders** | 2027-06-05 → 2027-12-29 (+207d) | 2027-06-22 → 2028-01-16 (+208d) |  |  |
| RHD4CSWL1B07D051082 | Length 5.4m - (B7.05 51 33.06)-SWL1-B07-D05 | 2027-06-05 → 2027-12-29 (+207d) | 2027-06-10 → 2028-01-04 (+208d) |  |  |
| RHD4CSWL1B07D051084 | Installation of With cage, Length 4.3m - (B7.05 51 33.11)-SWL1-B07-D05 | 2027-06-12 → 2028-01-05 (+207d) | 2027-06-16 → 2028-01-10 (+208d) |  |  |
| RHD4CSWL1B07D051085 | Install Checkered plate - (B7.05 50 00 .01)-SWL1-B07-D05 | 2027-06-17 → 2028-01-11 (+208d) | 2027-06-22 → 2028-01-16 (+208d) |  |  |
| 40 | **RHD4-02-002-SWL1-B07-Finishes-Painting** | 2027-06-23 → 2028-01-17 (+208d) | 2027-06-28 → 2028-01-22 (+208d) |  |  |
| RHD4CSWL1B07D091086 | Internal Acrylic Paint For Walls Acrylic Paint - (B7.09 91 00.01)-SWL1-B07-D09 | 2027-06-23 → 2028-01-17 (+208d) | 2027-06-28 → 2028-01-22 (+208d) |  |  |
| RHD4CSWL1B07D091087 | External Acrylic Paint for walls Acrylic Paint - (B7.09 91 00.02)-SWL1-B07-D09 | 2027-06-23 → 2028-01-17 (+208d) | 2027-06-28 → 2028-01-22 (+208d) |  |  |
| 41 | **RHD4-02-002-SWL1-B07-Finishes-Epoxy Coating** | 2027-06-29 → 2028-01-23 (+208d) | 2027-07-03 → 2028-01-26 (+207d) |  |  |
| RHD4CSWL1B07D091088 | Internal Acrylic Paint For Walls Acrylic Paint - (B7.09 96 56.01)-SWL1-B07-D09 | 2027-06-29 → 2028-01-23 (+208d) | 2027-07-03 → 2028-01-26 (+207d) |  |  |
| 42 | **RHD4-02-002-SWL1-B07-Mechanical Works** | 2027-06-09 → 2028-01-03 (+208d) | 2027-07-26 → 2028-02-19 (+208d) |  |  |
| 43 | **RHD4-02-002-SWL1-B07-Mechanical Works-Wall mounted Split/AC** | 2027-07-04 → 2028-01-27 (+207d) | 2027-07-15 → 2028-02-08 (+208d) |  |  |
| RHD4CSWL1B07D151089 | Wall mounted Split Air Conditioning Unit. FCU-01 Installation 3.5 kw - (B7.23 81 26.01)-SWL1-B07-D15 | 2027-07-04 → 2028-01-27 (+207d) | 2027-07-10 → 2028-02-02 (+207d) |  |  |
| RHD4CSWL1B07D151090 | Wall mounted Split Air Conditioning Unit. FCU-01 Installation 3.5 kw - (B7.23 81 26.01)-SWL1-B07-D15 | 2027-07-11 → 2028-02-03 (+207d) | 2027-07-15 → 2028-02-08 (+208d) |  |  |
| 44 | **RHD4-02-002-SWL1-B07-Mechanical Works-Portable Fire Extinguishers** | 2027-07-17 → 2028-02-09 (+207d) | 2027-07-26 → 2028-02-19 (+208d) |  |  |
| RHD4CSWL1B07D151091 | Powder fire extinguishers installation - (B7.21 20 00.01)-SWL1-B07-D15 | 2027-07-17 → 2028-02-09 (+207d) | 2027-07-21 → 2028-02-14 (+208d) |  |  |
| RHD4CSWL1B07D151092 | CO2 fire extinguishers installation - (B7.21 20 00.02)-SWL1-B07-D15 | 2027-07-22 → 2028-02-15 (+208d) | 2027-07-26 → 2028-02-19 (+208d) |  |  |
| 45 | **RHD4-02-002-SWL1-B07-Mechanical Works-Scupper** | 2027-06-09 → 2028-01-03 (+208d) | 2027-06-12 → 2028-01-05 (+207d) |  |  |
| RHD4CSWL1B07D151093 | Scupper with diameter 110mm - Installation - (B7.22 13 19.13.01)-SWL1-B07-D15 | 2027-06-09 → 2028-01-03 (+208d) | 2027-06-12 → 2028-01-05 (+207d) |  |  |
| 46 | **RHD4-02-002-SWL1-B07-Mechanical Works-Pipes, Fittings & Appurtenances** | 2027-06-13 → 2028-01-06 (+207d) | 2027-06-16 → 2028-01-10 (+208d) |  |  |
| RHD4CSWL1B07D151094 | uPVC pipes with diameter 110mm. Roof Slab - (B7.22 13 16.01)-SWL1-B07-D15 | 2027-06-13 → 2028-01-06 (+207d) | 2027-06-15 → 2028-01-09 (+208d) |  |  |
| RHD4CSWL1B07D151095 | uPVC pipes with diameter 25mm. Roof Slab - (B7.22 13 16.02)-SWL1-B07-D15 | 2027-06-13 → 2028-01-06 (+207d) | 2027-06-16 → 2028-01-10 (+208d) |  |  |
| 47 | **RHD4-02-002-SWL1-B07-Electrical Works** | 2027-05-24 → 2027-12-18 (+208d) | 2027-09-04 → 2028-04-03 (+212d) |  |  |
| 48 | **RHD4-02-002-SWL1-B07-Electrical Works-4Cx 185mm2 CU/XLPE/SWA/PVC** | 2027-05-24 → 2027-12-18 (+208d) | 2027-06-06 → 2027-12-30 (+207d) |  |  |
| RHD4CSWL1B07D161096 | Electrical Conduits and Pull Box Installation for LV Cables 4Cx185 mm²- (B7.26 05 19.01)-SWL1-B07-D16 | 2027-05-24 → 2027-12-18 (+208d) | 2027-05-27 → 2027-12-21 (+208d) |  |  |
| RHD4CSWL1B07D161097 | Cable Tray Installation for LV Cables 4Cx185 mm²- (B7.26 05 19.01)-SWL1-B07-D16 | 2027-05-29 → 2027-12-22 (+207d) | 2027-05-31 → 2027-12-25 (+208d) |  | resources LV Cables - 4Cx 185mm2 CU/XLPE/SWA/PVC [9 m]; Unskilled Labor [74.38 h]; Electrician [12.41 h] → LV Cables - 4Cx 185mm2 CU/XLPE/SWA/PVC [9 m]; Unskilled Labor [74.4 h]; Electrician [12.41 h] |
| RHD4CSWL1B07D161098 | LV Cable Pulling for LV Cables 4Cx185 mm²- (B7.26 05 19.01)-SWL1-B07-D16 | 2027-06-01 → 2027-12-26 (+208d) | 2027-06-02 → 2027-12-27 (+208d) |  |  |
| RHD4CSWL1B07D161099 | LV Cable Termination for LV Cables 4Cx185 mm²- (B7.26 05 19.01)-SWL1-B07-D16 | 2027-06-03 → 2027-12-28 (+208d) | 2027-06-06 → 2027-12-30 (+207d) |  |  |
| 49 | **RHD4-02-002-SWL1-B07-Electrical Works-4Cx 70mm2 + 1Cx35mm2 Cu/XLPE/PVC FROM MCC-3 TO LP-01** | 2027-06-03 → 2027-12-28 (+208d) | 2027-06-16 → 2028-01-10 (+208d) |  |  |
| RHD4CSWL1B07D161100 | Electrical Conduits and Pull Box Installation for LV Cables 4Cx95 mm²- (B7.26 05 19.02)-SWL1-B07-D16 | 2027-06-03 → 2027-12-28 (+208d) | 2027-06-06 → 2027-12-30 (+207d) |  |  |
| RHD4CSWL1B07D161101 | Cable Tray Installation for LV Cables 4Cx95 mm²- (B7.26 05 19.02)-SWL1-B07-D16 | 2027-06-07 → 2028-01-01 (+208d) | 2027-06-08 → 2028-01-02 (+208d) |  |  |
| RHD4CSWL1B07D161102 | LV Cable Pulling for LV Cables 4Cx95 mm²- (B7.26 05 19.02)-SWL1-B07-D16 | 2027-06-09 → 2028-01-03 (+208d) | 2027-06-13 → 2028-01-06 (+207d) |  |  |
| RHD4CSWL1B07D161103 | LV Cable Termination for LV Cables 4Cx95 mm²- (B7.26 05 19.02)-SWL1-B07-D16 | 2027-06-14 → 2028-01-08 (+208d) | 2027-06-16 → 2028-01-10 (+208d) |  |  |
| 50 | **RHD4-02-002-SWL1-B07-Electrical Works-4Cx 6mm2 + 1Cx6mm2 Cu/XLPE/PVC** | 2027-06-07 → 2028-01-01 (+208d) | 2027-06-23 → 2028-01-16 (+207d) |  |  |
| RHD4CSWL1B07D161104 | Electrical Conduits and Pull Box Installation for LV Cables 4Cx10 mm²- (B7.26 05 19.03)-SWL1-B07-D16 | 2027-06-07 → 2028-01-01 (+208d) | 2027-06-09 → 2028-01-03 (+208d) |  |  |
| RHD4CSWL1B07D161105 | Cable Tray Installation for LV Cables 4Cx10 mm²- (B7.26 05 19.03)-SWL1-B07-D16 | 2027-06-10 → 2028-01-04 (+208d) | 2027-06-14 → 2028-01-08 (+208d) |  |  |
| RHD4CSWL1B07D161106 | LV Cable Pulling for LV Cables 4Cx10 mm²- (B7.26 05 19.03)-SWL1-B07-D16 | 2027-06-15 → 2028-01-09 (+208d) | 2027-06-17 → 2028-01-11 (+208d) |  |  |
| RHD4CSWL1B07D161107 | LV Cable Termination for LV Cables 4Cx10 mm²- (B7.26 05 19.03)-SWL1-B07-D16 | 2027-06-19 → 2028-01-12 (+207d) | 2027-06-23 → 2028-01-16 (+207d) | 5d → 4d |  |
| 51 | **RHD4-02-002-SWL1-B07-Electrical Works-4Cx 95mm2 + 1Cx50mm2 Cu/XLPE/PVC** | 2027-06-13 → 2028-01-06 (+207d) | 2027-06-26 → 2028-01-19 (+207d) |  |  |
| RHD4CSWL1B07D161108 | Electrical Conduits and Pull Box Installation for LV Cables 4Cx10 mm²+1Cx10 mm²- (B7.26 05 19.05)-SWL1-B07-D16 | 2027-06-13 → 2028-01-06 (+207d) | 2027-06-15 → 2028-01-09 (+208d) |  |  |
| RHD4CSWL1B07D161109 | Cable Tray Installation for LV Cables 4Cx10 mm²+1Cx10 mm²- (B7.26 05 19.05)-SWL1-B07-D16 | 2027-06-16 → 2028-01-10 (+208d) | 2027-06-20 → 2028-01-13 (+207d) |  |  |
| RHD4CSWL1B07D161110 | LV Cable Pulling for LV Cables 4Cx10 mm²+1Cx10 mm²- (B7.26 05 19.05)-SWL1-B07-D16 | 2027-06-21 → 2028-01-15 (+208d) | 2027-06-23 → 2028-01-17 (+208d) |  |  |
| RHD4CSWL1B07D161111 | LV Cable Termination for LV Cables 4Cx10 mm²+1Cx10 mm²- (B7.26 05 19.05)-SWL1-B07-D16 | 2027-06-24 → 2028-01-18 (+208d) | 2027-06-26 → 2028-01-19 (+207d) |  |  |
| 53 | **RHD4-02-002-SWL1-B07-Electrical Works-Wiring Devices** | 2027-06-27 → 2028-01-20 (+207d) | 2027-07-05 → 2028-01-29 (+208d) |  |  |
| RHD4CSWL1B07D161116 | 13A Signle Socket Outlet WP for Wiring Devices - (B7.26 27 26 .01)-SWL1-B07-D16 | 2027-06-27 → 2028-01-20 (+207d) | 2027-06-29 → 2028-01-23 (+208d) |  |  |
| RHD4CSWL1B07D161117 | 13A Double Socket Outlet WP for Wiring Devices - (B7.26 27 26 .02)-SWL1-B07-D16 | 2027-06-30 → 2028-01-24 (+208d) | 2027-07-01 → 2028-01-25 (+208d) |  |  |
| RHD4CSWL1B07D161118 | 25A Switch Socket Outlet (for Split Unit), WP for Wiring Devices - (B7.26 27 26 .03)-SWL1-B07-D16 | 2027-07-03 → 2028-01-26 (+207d) | 2027-07-05 → 2028-01-29 (+208d) |  |  |
| 54 | **RHD4-02-002-SWL1-B07-Electrical Works-Grounding and Bonding** | 2027-07-03 → 2028-01-26 (+207d) | 2027-07-17 → 2028-02-09 (+207d) |  |  |
| RHD4CSWL1B07D161119 | Copper Conductor Connecting to Steel Rebar Installation for Copper Rods - (B7.26 05 26.01)-SWL1-B07-D16 | 2027-07-03 → 2028-01-26 (+207d) | 2027-07-06 → 2028-01-30 (+208d) |  |  |
| RHD4CSWL1B07D161120 | Earth pits Installation for Copper Rods - (B7.26 05 26.01)-SWL1-B07-D16 | 2027-07-07 → 2028-01-31 (+208d) | 2027-07-11 → 2028-02-03 (+207d) |  |  |
| RHD4CSWL1B07D161121 | Earth Bars Installation for Copper Rods - (B7.26 05 26.01)-SWL1-B07-D16 | 2027-07-12 → 2028-02-05 (+208d) | 2027-07-13 → 2028-02-06 (+208d) |  |  |
| RHD4CSWL1B07D161122 | Copper Tape on Roof Installation for Copper Rods - (B7.26 05 26.01)-SWL1-B07-D16 | 2027-07-14 → 2028-02-07 (+208d) | 2027-07-17 → 2028-02-09 (+207d) |  |  |
| 55 | **RHD4-02-002-SWL1-B07-Electrical Works-Indoor Lighting Fixtures** | 2027-07-14 → 2028-02-07 (+208d) | 2027-08-02 → 2028-02-24 (+206d) |  |  |
| RHD4CSWL1B07D161123 | Electrical Conduits and Pull Box Installation - 24.5 W for Lighting Fixtures - (Indoor Lighting Fixtures )-SWL1-B07-D16 | 2027-07-14 → 2028-02-07 (+208d) | 2027-07-17 → 2028-02-09 (+207d) |  |  |
| RHD4CSWL1B07D161124 | LV Cable Pulling for Lighting Fixtures - (B7.26 51 00.01)-SWL1-B07-D16 | 2027-07-18 → 2028-02-10 (+207d) | 2027-07-20 → 2028-02-13 (+208d) |  |  |
| RHD4CSWL1B07D161126 | Electrical Conduits and Pull Box Installation - 8 W for Lighting Fixtures - (B7.26 51 00.02)-SWL1-B07-D16 | 2027-07-18 → 2028-02-10 (+207d) | 2027-07-20 → 2028-02-13 (+208d) |  |  |
| RHD4CSWL1B07D161125 | Lighting Fixture Installation for Lighting Fixtures - (B7.26 51 00.01)-SWL1-B07-D16 | 2027-07-21 → 2028-02-14 (+208d) | 2027-07-25 → 2028-02-17 (+207d) |  |  |
| RHD4CSWL1B07D161127 | LV Cable Pulling for Lighting Fixtures - (B7.26 51 00.02)-SWL1-B07-D16 | 2027-07-21 → 2028-02-14 (+208d) | 2027-07-25 → 2028-02-17 (+207d) |  |  |
| RHD4CSWL1B07D161128 | Lighting Fixture Installation for Lighting Fixtures - (B7.26 51 00.02)-SWL1-B07-D16 | 2027-07-26 → 2028-02-19 (+208d) | 2027-08-02 → 2028-02-24 (+206d) | 7d → 5d |  |
| 56 | **RHD4-02-002-SWL1-B07-Electrical Works-Outdoor Lighting Fixtures** | 2027-07-27 → 2028-02-20 (+208d) | 2027-08-15 → 2028-03-14 (+212d) |  |  |
| RHD4CSWL1B07D161129 | Electrical Conduits and Pull Box Installation - 7 W for Lighting Fixtures - (Outdoor Lighting Fixtures )-SWL1-B07-D16 | 2027-07-27 → 2028-02-20 (+208d) | 2027-07-31 → 2028-02-24 (+208d) |  |  |
| RHD4CSWL1B07D161130 | LV Cable Pulling for Lighting Fixtures - (B7.26 56 00.01)-SWL1-B07-D16 | 2027-08-01 → 2028-02-26 (+209d) | 2027-08-03 → 2028-03-02 (+212d) |  |  |
| RHD4CSWL1B07D161132 | Electrical Conduits and Pull Box Installation - 42.5 W for Lighting Fixtures - (B7.26 56 00.02)-SWL1-B07-D16 | 2027-08-01 → 2028-02-26 (+209d) | 2027-08-04 → 2028-03-04 (+213d) |  |  |
| RHD4CSWL1B07D161131 | Lighting Fixture Installation for Lighting Fixtures - (B7.26 56 00.01)-SWL1-B07-D16 | 2027-08-04 → 2028-03-04 (+213d) | 2027-08-07 → 2028-03-06 (+212d) |  |  |
| RHD4CSWL1B07D161133 | LV Cable Pulling for Lighting Fixtures - (B7.26 56 00.02)-SWL1-B07-D16 | 2027-08-05 → 2028-03-05 (+213d) | 2027-08-10 → 2028-03-09 (+212d) |  |  |
| RHD4CSWL1B07D161134 | Lighting Fixture Installation for Lighting Fixtures - (B7.26 56 00.02)-SWL1-B07-D16 | 2027-08-11 → 2028-03-11 (+213d) | 2027-08-15 → 2028-03-14 (+212d) |  |  |
| 57 | **RHD4-02-002-SWL1-B07-Electrical Works- Enclosed Switches and Circuit Breakers** | 2027-07-14 → 2028-02-07 (+208d) | 2027-07-26 → 2028-02-19 (+208d) |  |  |

| ID | Task | Start | Finish | Complete | Other |
| --- | --- | --- | --- | --- | --- |
| RHD4CSWL1B07D161135 | 25-amp single-pole disconnect switches for Lighting Fixtures - (B7.26 28 16.01)-SWL1-B07-D16 | 2027-07-14 → 2028-02-07 (+208d) | 2027-07-17 → 2028-02-09 (+207d) |  |  |
| RHD4CSWL1B07D161136 | 25-amp three-pole disconnect switches for Lighting Fixtures - (B7.26 28 16.02)-SWL1-B07-D16 | 2027-07-18 → 2028-02-10 (+207d) | 2027-07-21 → 2028-02-14 (+208d) |  |  |
| RHD4CSWL1B07D161137 | 125-amp three-pole disconnect switches for Lighting Fixtures - (B7.26 28 16.03)-SWL1-B07-D16 | 2027-07-22 → 2028-02-15 (+208d) | 2027-07-26 → 2028-02-19 (+208d) |  |  |
| 58 | **RHD4-02-002-SWL1-B07-Electrical Works-Secondery Panel Boards** | 2027-07-22 → 2028-02-15 (+208d) | 2027-08-05 → 2028-03-05 (+213d) |  |  |
| RHD4CSWL1B07D161138 | Panel "DB-U3" Installation for Panelboards - (B7.26 24 16.01)-SWL1-B07-D16 | 2027-07-22 → 2028-02-15 (+208d) | 2027-07-24 → 2028-02-16 (+207d) |  |  |
| RHD4CSWL1B07D161139 | Panel "DB-U3" Termination for Panelboards - (B7.26 24 16.01)-SWL1-B07-D16 | 2027-07-25 → 2028-02-17 (+207d) | 2027-07-28 → 2028-02-21 (+208d) |  |  |
| RHD4CSWL1B07D161140 | Panel "LPP-UT-3" Installation for Panelboards - (B7.26 24 16.02)-SWL1-B07-D16 | 2027-07-29 → 2028-02-23 (+209d) | 2027-08-02 → 2028-03-01 (+212d) |  |  |
| RHD4CSWL1B07D161141 | Panel "DB-UT-3" Termination for Panelboards - (B7.26 24 16.02)-SWL1-B07-D16 | 2027-08-03 → 2028-03-02 (+212d) | 2027-08-05 → 2028-03-05 (+213d) |  |  |
| 60 | **RHD4-02-002-SWL1-B07-Electrical Works-Addressable Fire-Alarm System** | 2027-08-03 → 2028-03-02 (+212d) | 2027-08-24 → 2028-03-23 (+212d) |  |  |
| RHD4CSWL1B07D161145 | 1 loop FACP with charger, battries and auto dialer for Fire Alarm - (B7.28 46 00.01)-SWL1-B07-D16 | 2027-08-03 → 2028-03-02 (+212d) | 2027-08-07 → 2028-03-06 (+212d) |  |  |
| RHD4CSWL1B07D161146 | Addressable type fire alarm Photoelectric smoke detector complete for Fire Alarm - (B7.28 46 00.05)-SWL1-B07-D16 | 2027-08-08 → 2028-03-07 (+212d) | 2027-08-11 → 2028-03-11 (+213d) |  |  |
| RHD4CSWL1B07D161147 | Addressable type fire alarm manual call station/pull station for Fire Alarm - (B7.28 46 00.06)-SWL1-B07-D16 | 2027-08-12 → 2028-03-12 (+213d) | 2027-08-15 → 2028-03-14 (+212d) |  |  |
| RHD4CSWL1B07D161148 | Conventional 24V DC fire alarm wall mounted 15cd flasher/strobe. for Fire Alarm - (B7.28 46 00.07)-SWL1-B07-D16 | 2027-08-16 → 2028-03-15 (+212d) | 2027-08-18 → 2028-03-18 (+213d) |  |  |
| RHD4CSWL1B07D161149 | Conventional 24V DC fire alarm wall mounted 15cd flasher weather proof for Fire Alarm - (B7.28 46 00.08)-SWL1-B07-D16 | 2027-08-19 → 2028-03-19 (+213d) | 2027-08-22 → 2028-03-21 (+212d) |  |  |
| RHD4CSWL1B07D161150 | Short CCT Isolator. for Fire Alarm - (B7.28 46 00.09)-SWL1-B07-D16 | 2027-08-23 → 2028-03-22 (+212d) | 2027-08-24 → 2028-03-23 (+212d) |  |  |
| 61 | **RHD4-02-002-SWL1-B07-Electrical Works-Main Motor Control Center (MCC)** | 2027-08-23 → 2028-03-22 (+212d) | 2027-08-29 → 2028-03-28 (+212d) |  |  |
| RHD4CSWL1B07D161151 | Installation for MCC-3 - (B7.26 29 00.01)-SWL1-B07-D16 | 2027-08-23 → 2028-03-22 (+212d) | 2027-08-26 → 2028-03-26 (+213d) |  |  |
| RHD4CSWL1B07D161152 | Termination for MCC-3 - (B7.26 29 00.01)-SWL1-B07-D16 | 2027-08-28 → 2028-03-27 (+212d) | 2027-08-29 → 2028-03-28 (+212d) |  |  |
| 62 | **RHD4-02-002-SWL1-B07-Electrical Works-Programmable Logic Controllers** | 2027-08-28 → 2028-03-27 (+212d) | 2027-09-04 → 2028-04-03 (+212d) |  |  |
| RHD4CSWL1B07D161153 | PLC System Installation for - (B7.40 63 43.01)-SWL1-B07-D16 | 2027-08-28 → 2028-03-27 (+212d) | 2027-08-30 → 2028-03-29 (+212d) |  | resources PLC system, serving the pumping station and all related utilities [1 Item]; Unskilled Labor [978.39 h]; Electrician [326.17 h] → PLC system, serving the pumping station and all related utilities [1 Item]; Unskilled Labor [978.4 h]; Electrician [326.17 h] |
| RHD4CSWL1B07D161154 | Process Control Wiring Installation for - (B7.40 67 10.01)-SWL1-B07-D16 | 2027-08-28 → 2028-03-27 (+212d) | 2027-08-30 → 2028-03-29 (+212d) |  |  |
| RHD4CSWL1B07D161155 | Instrumentation for Process Systems for - (B7.40 70 00.01)-SWL1-B07-D16 | 2027-08-31 → 2028-03-30 (+212d) | 2027-09-04 → 2028-04-03 (+212d) |  |  |
| 5 | **RHD4-02-002-Sewage Lift Station 01-Wet Well Structure And Valve Chamber** | 2026-12-06 → 2026-10-20 (-47d) | 2027-06-21 → 2027-12-07 (+169d) |  |  |
| 16 | **RHD4-02-002-SWL1-B07-Pump Lifting System** | 2027-05-13 → 2027-11-03 (+174d) | 2027-06-21 → 2027-12-07 (+169d) |  |  |
| 17 | **RHD4-02-002-SWL1-B07-Ductile Pipe Connection and Fittings-Pipes, Fittings & Appurtenances** | 2027-05-13 → 2027-11-03 (+174d) | 2027-06-03 → 2027-11-20 (+170d) |  |  |
| RHD4CSWL1B07D151027 | Buried ductile iron pipes with diameter 400 mm Installation - (B7.22 11 13.03)-SWL1-B07-D15 | 2027-05-13 → 2027-11-03 (+174d) | 2027-05-22 → 2027-11-07 (+169d) |  |  |
| RHD4CSWL1B07D151029 | Buried ductile iron pipes with diameter 250 mm Installation - (B7.22 11 13.05)-SWL1-B07-D15 | 2027-05-23 → 2027-11-08 (+169d) | 2027-05-27 → 2027-11-13 (+170d) |  |  |
| RHD4CSWL1B07D151030 | Double flanged ductile iron pipe with diameter 250 mm Installation - (B7.22 11 13.06)-SWL1-B07-D15 | 2027-05-29 → 2027-11-14 (+169d) | 2027-06-03 → 2027-11-20 (+170d) |  |  |
| 18 | **RHD4-02-002-SWL1-B07-Ductile Pipe Connection and Fittings-Isolation Penstock** | 2027-06-05 → 2027-11-21 (+169d) | 2027-06-16 → 2027-12-02 (+169d) |  |  |
| RHD4CSWL1B07D151031 | Install Electrically operated penstock 500 * 500 mm - (B7.35 21 23.01)-SWL1-B07-D15 | 2027-06-05 → 2027-11-21 (+169d) | 2027-06-16 → 2027-12-02 (+169d) |  |  |
| 19 | **RHD4-02-002-SWL1-B07-Ductile Pipe Connection and Fittings-JIB Crane** | 2027-06-17 → 2027-12-04 (+170d) | 2027-06-21 → 2027-12-07 (+169d) |  |  |
| RHD4CSWL1B07D151032 | Install JIB Crane For storm and sewer pumping Stations - (B7.41 22 10.01)-SWL1-B07-D15 | 2027-06-17 → 2027-12-04 (+170d) | 2027-06-21 → 2027-12-07 (+169d) |  |  |
| 6 | **RHD4-02-002-SWL1-B07-Wet Well Structure And Valve Chamber** | 2026-12-06 → 2026-10-20 (-47d) | 2027-05-12 → 2027-11-02 (+174d) |  |  |
| 10 | **RHD4-02-002-SWL1-B07-WET WELL-Metal Doors** | 2027-03-24 → 2027-09-13 (+173d) | 2027-03-30 → 2027-09-19 (+173d) |  |  |
| RHD4CSWL1B07D051014 | metal floor door size (1000x1000mm) for Wet well structure - (B7.08 31 13.04)-SWL1-B07-D05 | 2027-03-24 → 2027-09-13 (+173d) | 2027-03-30 → 2027-09-19 (+173d) |  |  |
| 11 | **RHD4-02-002-SWL1-B07-WET WELL-Screening Container** | 2027-03-31 → 2027-09-20 (+173d) | 2027-04-06 → 2027-09-27 (+174d) |  |  |
| RHD4CSWL1B07D151016 | Steel Container Screening Installation - (B7.46 21 00.01)-SWL1-B07-D15 | 2027-03-31 → 2027-09-20 (+173d) | 2027-04-06 → 2027-09-27 (+174d) |  |  |
| 12 | **RHD4-02-002-SWL1-B07-WET WELL-Motorized basket screen** | 2027-04-07 → 2027-09-28 (+174d) | 2027-04-21 → 2027-10-12 (+174d) |  |  |
| RHD4CSWL1B07D151017 | Basket Screen Frame Mounting - (B7.46 21 00.01)-SWL1-B07-D15 | 2027-04-07 → 2027-09-28 (+174d) | 2027-04-11 → 2027-10-02 (+174d) |  |  |
| RHD4CSWL1B07D151018 | Basket Screen Alignment - (B7.46 21 01.01)-SWL1-B07-D15 | 2027-04-12 → 2027-10-03 (+174d) | 2027-04-17 → 2027-10-07 (+173d) |  |  |
| RHD4CSWL1B07D151019 | Motor and Drive System Installation - (B7.46 21 01.01)-SWL1-B07-D15 | 2027-04-18 → 2027-10-09 (+174d) | 2027-04-21 → 2027-10-12 (+174d) |  |  |
| 13 | **RHD4-02-002-SWL1-B07-WET WELL-Pumps** | 2027-04-22 → 2027-10-13 (+174d) | 2027-05-03 → 2027-10-24 (+174d) |  |  |
| RHD4CSWL1B07D151021 | Constant Speed Submersible pump Installation - 53 lps - (B7. 22 14 29.16.02)-SWL1-B07-D15 | 2027-04-22 → 2027-10-13 (+174d) | 2027-05-03 → 2027-10-24 (+174d) |  |  |
| 14 | **RHD4-02-002-SWL1-B07-WET WELL-Gate Valves** | 2027-05-04 → 2027-10-25 (+174d) | 2027-05-12 → 2027-11-02 (+174d) |  |  |
| RHD4CSWL1B07D151023 | Manually operated Gate Valve DN250 for - (B7.22 05 23.02)-SWL1-B07-D15 | 2027-05-04 → 2027-10-25 (+174d) | 2027-05-12 → 2027-11-02 (+174d) |  |  |
| 7 | **RHD4-02-002-SWL1-B07-WET WELL-Concrete works** | 2026-12-06 → 2026-10-20 (-47d) | 2027-02-10 → 2027-08-07 (+178d) |  |  |
| RHD4CSWL1B07D021002 | Lean Concrete for Wet well structure - (B7.03 00 00 .01)-SWL1-B07-D02 | 2026-12-06 → 2026-10-20 A (-47d) | 2026-12-09 → 2026-10-24 A (-46d) | 0% → 100% |  |
| RHD4CSWL1B07D021003 | Water proofing membrance for Wet well structure - (B7.07 13 13.01)-SWL1-B07-D02 | 2026-12-10 → 2027-05-01 (+142d) | 2026-12-12 → 2027-05-02 (+141d) |  |  |
| RHD4CSWL1B07D021004 | Screed for Wet well structure - (B7.03 00 00 .04)-SWL1-B07-D02 | 2026-12-13 → 2027-05-03 (+141d) | 2026-12-16 → 2027-05-06 (+141d) |  |  |
| RHD4CSWL1B07D021005 | Steel Fixing for Wet well structure - (B7.03 00 00 .05)-SWL1-B07-D02 | 2027-01-21 → 2027-07-18 (+178d) | 2027-01-30 → 2027-07-26 (+177d) |  | resources Supply and cast in place reinforced concrete with fc'=31 Mpa for the sub- structures for (Sewer and Storm Pump station) and (tunnels) for Footings [1.24 m3]; Unskilled Labor [16.77 h]; Steel Fixer [134.5 h] → Supply and cast in place reinforced concrete with fc'=31 Mpa for the sub- structures for (Sewer and Storm Pump station) and (tunnels) for Footings [1.24 m3]; Unskilled Labor [16.8 h]; Steel Fixer [134.5 h] |
| RHD4CSWL1B07D021006 | Formwork for Wet well structure - (B7.03 00 00 .05)-SWL1-B07-D02 | 2027-01-31 → 2027-07-27 (+177d) | 2027-02-06 → 2027-08-02 (+177d) |  | resources Supply and cast in place reinforced concrete with fc'=31 Mpa for the sub- structures for (Sewer and Storm Pump station) and (tunnels) for Footings [1.24 m3]; Unskilled Labor [5.01 h]; RIC Machine [4.79 h]; Concrete Mixer Truck [2.4 h]; Concrete Pump [2.4 h] → Supply and cast in place reinforced concrete with fc'=31 Mpa for the sub- structures for (Sewer and Storm Pump station) and (tunnels) for Footings [1.24 m3]; Unskilled Labor [5.01 h]; RIC Machine [4.8 h]; Concrete Mixer Truck [2.4 h]; Concrete Pump [2.4 h] |
| RHD4CSWL1B07D021007 | RC Casting for Wet well structure - (B7.03 00 00 .05)-SWL1-B07-D02 | 2027-02-07 → 2027-08-03 (+177d) | 2027-02-10 → 2027-08-07 (+178d) |  |  |
| 8 | **RHD4-02-002-SWL1-B07-WET WELL-Retaining Walls & Slab** | 2027-02-11 → 2027-08-08 (+178d) | 2027-03-17 → 2027-09-06 (+173d) |  |  |
| RHD4CSWL1B07D021008 | Steel Fixing for Wet well structure - (B7.03 00 00 .07)-SWL1-B07-D02 | 2027-02-11 → 2027-08-08 (+178d) | 2027-02-20 → 2027-08-16 (+177d) |  |  |
| RHD4CSWL1B07D021009 | Formwork for Wet well structure - (B7.03 00 00 .07)-SWL1-B07-D02 | 2027-02-21 → 2027-08-17 (+177d) | 2027-02-27 → 2027-08-22 (+176d) |  |  |
| RHD4CSWL1B07D021010 | RC Casting for Wet well structure - (B7.03 00 00 .07)-SWL1-B07-D02 | 2027-02-28 → 2027-08-23 (+176d) | 2027-03-13 → 2027-09-01 (+172d) |  | resources Supply and cast in place reinforced concrete with fc'=31 Mpa for the sub- structures for (Sewer and Storm Pump station) and (tunnels) for Walls below ground level [29.48 m3]; Unskilled Labor [193.63 h]; RIC Machine [181.87 h]; Concrete Mixer Truck [90.93 h]; Concrete Pump [90.93 h] → Supply and cast in place reinforced concrete with fc'=31 Mpa for the sub- structures for (Sewer and Storm Pump station) and (tunnels) for Walls below ground level [29.48 m3]; Unskilled Labor [193.6 h]; RIC Machine [181.87 h]; Concrete Mixer Truck [90.93 h]; Concrete Pump [90.93 h] |
| RHD4CSWL1B07D021011 | Water protection Board membrance for Wet well structure - (B7.07 13 13.02)-SWL1-B07-D02 | 2027-03-14 → 2027-09-02 (+172d) | 2027-03-17 → 2027-09-06 (+173d) |  |  |
| 9 | **RHD4-02-002-SWL1-B07-WET WELL-Finishes** | 2027-03-18 → 2027-09-07 (+173d) | 2027-03-23 → 2027-09-12 (+173d) |  |  |
| RHD4CSWL1B07D091012 | Epoxy Coating for Wet well structure - (B7.09 96 56.01)-SWL1-B07-D09 | 2027-03-18 → 2027-09-07 (+173d) | 2027-03-23 → 2027-09-12 (+173d) |  |  |
| 63 | **RHD4-02-002-Sewage Lift Station 01-Site Works** | 2027-06-09 → 2028-01-03 (+208d) | 2027-09-18 → 2028-04-17 (+212d) |  |  |
| 64 | **RHD4-02-002-SWL1-B07-FENCE & GATES** | 2027-06-09 → 2028-01-03 (+208d) | 2027-06-29 → 2028-01-23 (+208d) |  |  |
| 65 | **RHD4-02-002-SWL1-B07-FENCE & GATES-Perimeter Fencing** | 2027-06-09 → 2028-01-03 (+208d) | 2027-06-24 → 2028-01-18 (+208d) |  |  |
| RHD4CSWL1B07D101158 | Chain Link Fence - North Side Installation - (B1.32 31 00.01)-SWL1-B07-D10 | 2027-06-09 → 2028-01-03 (+208d) | 2027-06-12 → 2028-01-05 (+207d) |  | resources Fences and Gates [64 m]; Skilled labor [7.73 h]; Unskilled Labor [46.39 h]; Excavator-Poclain [12.09 h]; Dump Truck [24.18 h] → Fences and Gates [64 m]; Skilled labor [7.73 h]; Unskilled Labor [46.4 h]; Excavator-Poclain [12.09 h]; Dump Truck [24.18 h] |
| RHD4CSWL1B07D101159 | Chain Link Fence - South Side Installation - (B1.32 31 00.01)-SWL1-B07-D10 | 2027-06-13 → 2028-01-06 (+207d) | 2027-06-15 → 2028-01-09 (+208d) |  | resources Fences and Gates [64 m]; Skilled labor [7.73 h]; Unskilled Labor [46.39 h]; Excavator-Poclain [12.09 h]; Dump Truck [24.18 h] → Fences and Gates [64 m]; Skilled labor [7.73 h]; Unskilled Labor [46.4 h]; Excavator-Poclain [12.09 h]; Dump Truck [24.18 h] |
| RHD4CSWL1B07D101160 | Chain Link Fence - West Side Installation - (B1.32 31 00.01)-SWL1-B07-D10 | 2027-06-16 → 2028-01-10 (+208d) | 2027-06-20 → 2028-01-13 (+207d) |  | resources Fences and Gates [64 m]; Skilled labor [7.73 h]; Unskilled Labor [46.39 h]; Excavator-Poclain [12.09 h]; Dump Truck [24.18 h] → Fences and Gates [64 m]; Skilled labor [7.73 h]; Unskilled Labor [46.4 h]; Excavator-Poclain [12.09 h]; Dump Truck [24.18 h] |
| RHD4CSWL1B07D101161 | Chain Link Fence - East Side Installation - (B1.32 31 00.01)-SWL1-B07-D10 | 2027-06-21 → 2028-01-15 (+208d) | 2027-06-24 → 2028-01-18 (+208d) |  | resources Fences and Gates [64 m]; Skilled labor [7.73 h]; Unskilled Labor [46.39 h]; Excavator-Poclain [12.09 h]; Dump Truck [24.18 h] → Fences and Gates [64 m]; Skilled labor [7.73 h]; Unskilled Labor [46.4 h]; Excavator-Poclain [12.09 h]; Dump Truck [24.18 h] |
| 66 | **RHD4-02-002-SWL1-B07-FENCE & GATES-Entrance Gates** | 2027-06-26 → 2028-01-19 (+207d) | 2027-06-29 → 2028-01-23 (+208d) |  |  |
| RHD4CSWL1B07D101162 | Main Entrance Gate Installation - (B1.32 31 00.01)-SWL1-B07-D10 | 2027-06-26 → 2028-01-19 (+207d) | 2027-06-29 → 2028-01-23 (+208d) |  |  |
| 67 | **RHD4-02-002-SWL1-B07-FLOW METER CHAMABER** | 2027-06-26 → 2028-01-19 (+207d) | 2027-09-09 → 2028-04-09 (+213d) |  |  |
| 68 | **RHD4-02-002-SWL1-B07-FLOW METER CHAMABER-Concrete works** | 2027-06-26 → 2028-01-19 (+207d) | 2027-07-17 → 2028-02-09 (+207d) |  |  |

| ID | Task | Start | Finish | Other |
| --- | --- | --- | --- | --- |
| RHD4CSWL1B07D031165 | Lean Concrete 100mm - (B7.03 00 00 .01)-SWL1-B07-D03 | 2027-06-26 → 2028-01-19 (+207d) | 2027-06-28 → 2028-01-22 (+208d) |  |
| RHD4CSWL1B07D031166 | Water proofing membrance Bituminous Sheet - (B7.07 13 13.01)-SWL1-B07-D03 | 2027-06-29 → 2028-01-23 (+208d) | 2027-07-03 → 2028-01-26 (+207d) | resources Bituminous Sheet Waterproofing (2 layers of waterproofing bitumenous membrane 4mm below footings) [26 m2]; Skilled labor [5.77 h]; Unskilled Labor [34.74 h]; Excavator-Poclain [9.04 h]; RIC Machine [27.23 h]; Dump Truck [18.19 h] → Bituminous Sheet Waterproofing (2 layers of waterproofing bitumenous membrane 4mm below footings) [26 m2]; Skilled labor [5.77 h]; Unskilled Labor [34.74 h]; Excavator-Poclain [9.04 h]; RIC Machine [27.2 h]; Dump Truck [18.19 h] |
| RHD4CSWL1B07D031167 | Screed 50mm - (B7.03 00 00 .04)-SWL1-B07-D03 | 2027-07-04 → 2028-01-27 (+207d) | 2027-07-07 → 2028-01-31 (+208d) |  |
| RHD4CSWL1B07D031168 | Steel Fixing - (B7.03 00 00 .05)-SWL1-B07-D03 | 2027-07-08 → 2028-02-01 (+208d) | 2027-07-11 → 2028-02-03 (+207d) |  |
| RHD4CSWL1B07D031169 | Formwork - (B7.03 00 00 .05)-SWL1-B07-D03 | 2027-07-12 → 2028-02-05 (+208d) | 2027-07-14 → 2028-02-07 (+208d) |  |
| RHD4CSWL1B07D031170 | RC Casting Fluid-Applied - (B7.03 00 00 .05)-SWL1-B07-D03 | 2027-07-15 → 2028-02-08 (+208d) | 2027-07-17 → 2028-02-09 (+207d) |  |
| 69 | **RHD4-02-002-SWL1-B07-FLOW METER CHAMABER-Retaining Walls & Slab** | 2027-07-18 → 2028-02-10 (+207d) | 2027-08-02 → 2028-03-01 (+212d) |  |
| RHD4CSWL1B07D031171 | Steel Fixing - (B7.03 00 00 .07)-SWL1-B07-D03 | 2027-07-18 → 2028-02-10 (+207d) | 2027-07-20 → 2028-02-13 (+208d) |  |
| RHD4CSWL1B07D031172 | Formwork - (B7.03 00 00 .07)-SWL1-B07-D03 | 2027-07-21 → 2028-02-14 (+208d) | 2027-07-24 → 2028-02-16 (+207d) |  |
| RHD4CSWL1B07D031173 | RC Casting - (B7.03 00 00 .07)-SWL1-B07-D03 | 2027-07-25 → 2028-02-17 (+207d) | 2027-07-28 → 2028-02-21 (+208d) |  |
| RHD4CSWL1B07D031174 | Water protection Board membrance Fluid-Applied - (B7.07 14 00.01)-SWL1-B07-D03 | 2027-07-29 → 2028-02-23 (+209d) | 2027-08-02 → 2028-03-01 (+212d) |  |
| 70 | **RHD4-02-002-SWL1-B07-FLOW METER CHAMABER-Magnetic type flowmeter Installation** | 2027-08-03 → 2028-03-02 (+212d) | 2027-08-19 → 2028-03-19 (+213d) |  |
| RHD4CSWL1B07D151175 | Flow meter installation 250mm - (B7.22 05 19.02)-SWL1-B07-D15 | 2027-08-03 → 2028-03-02 (+212d) | 2027-08-05 → 2028-03-05 (+213d) | resources Magnetic Type Flowmeter With Diameter 250mm [0.5 nr]; Skilled labor [0.22 h]; Unskilled Labor [1.63 h]; Excavator-Poclain [0.22 h]; RIC Machine [0.54 h]; Dump Truck [0.33 h] → Magnetic Type Flowmeter With Diameter 250mm [0.5 nr]; Skilled labor [0.22 h]; Unskilled Labor [1.6 h]; Excavator-Poclain [0.22 h]; RIC Machine [0.54 h]; Dump Truck [0.33 h] |
| RHD4CSWL1B07D151176 | UPVC Conduits 1 inch UPVC - (B7.22 05 19.02)-SWL1-B07-D15 | 2027-08-07 → 2028-03-06 (+212d) | 2027-08-09 → 2028-03-08 (+212d) |  |
| RHD4CSWL1B07D151177 | Electrical power and cable connection - (B7.22 05 19.02)-SWL1-B07-D15 | 2027-08-10 → 2028-03-09 (+212d) | 2027-08-15 → 2028-03-14 (+212d) |  |
| RHD4CSWL1B07D151178 | Flow meter Panel Integration and connection - (B7.22 05 19.02)-SWL1-B07-D15 | 2027-08-16 → 2028-03-15 (+212d) | 2027-08-19 → 2028-03-19 (+213d) |  |
| 71 | **RHD4-02-002-SWL1-B07-FLOW METER CHAMABER-Non-Return Valve** | 2027-09-05 → 2028-04-04 (+212d) | 2027-09-09 → 2028-04-09 (+213d) |  |
| RHD4CSWL1B07D151180 | Check Valve with diameter 250mm. 250mm - (B7.22 05 24.02)-SWL1-B07-D15 | 2027-09-05 → 2028-04-04 (+212d) | 2027-09-09 → 2028-04-09 (+213d) |  |
| 72 | **RHD4-02-002-SWL1-B07-GENERATOR FOUNDATION** | 2027-06-09 → 2028-01-03 (+208d) | 2027-07-08 → 2028-02-01 (+208d) |  |
| 73 | **RHD4-02-002-SWL1-B07-GENERATOR FOUNDATION-Concrete works** | 2027-06-09 → 2028-01-03 (+208d) | 2027-07-01 → 2028-01-25 (+208d) |  |
| RHD4CSWL1B07D031183 | Lean Concrete 100mm - (B7.03 00 00 .01)-SWL1-B07-D03 | 2027-06-09 → 2028-01-03 (+208d) | 2027-06-10 → 2028-01-04 (+208d) |  |
| RHD4CSWL1B07D031184 | Water proofing membrance Bituminous Sheet - (B7.07 13 13.01)-SWL1-B07-D03 | 2027-06-12 → 2028-01-05 (+207d) | 2027-06-14 → 2028-01-08 (+208d) | resources Bituminous Sheet Waterproofing (2 layers of waterproofing bitumenous membrane 4mm below footings) [26 m2]; Skilled labor [5.77 h]; Unskilled Labor [34.74 h]; Excavator-Poclain [9.04 h]; RIC Machine [27.23 h]; Dump Truck [18.19 h] → Bituminous Sheet Waterproofing (2 layers of waterproofing bitumenous membrane 4mm below footings) [26 m2]; Skilled labor [5.77 h]; Unskilled Labor [34.74 h]; Excavator-Poclain [9.04 h]; RIC Machine [27.2 h]; Dump Truck [18.19 h] |
| RHD4CSWL1B07D031185 | Screed 50mm - (B7.03 00 00 .04)-SWL1-B07-D03 | 2027-06-15 → 2028-01-09 (+208d) | 2027-06-16 → 2028-01-10 (+208d) |  |
| RHD4CSWL1B07D031186 | Steel Fixing - (B7.03 00 00 .05)-SWL1-B07-D03 | 2027-06-17 → 2028-01-11 (+208d) | 2027-06-20 → 2028-01-13 (+207d) |  |
| RHD4CSWL1B07D031187 | Formwork - (B7.03 00 00 .05)-SWL1-B07-D03 | 2027-06-21 → 2028-01-15 (+208d) | 2027-06-24 → 2028-01-18 (+208d) |  |
| RHD4CSWL1B07D031188 | RC Casting - (B7.03 00 00 .05)-SWL1-B07-D03 | 2027-06-26 → 2028-01-19 (+207d) | 2027-06-27 → 2028-01-20 (+207d) |  |
| RHD4CSWL1B07D031189 | Water protection Board membrance Fluid-Applied - (B7.07 14 00.01)-SWL1-B07-D03 | 2027-06-28 → 2028-01-22 (+208d) | 2027-07-01 → 2028-01-25 (+208d) |  |
| 74 | **RHD4-02-002-SWL1-B07-GENERATOR FOUNDATION-Standby Diesel Generator** | 2027-07-03 → 2028-01-26 (+207d) | 2027-07-08 → 2028-02-01 (+208d) |  |
| RHD4CSWL1B07D151190 | Standby Diesel Generator Set 150 KVA - Installation 150kva - (B7.26 32 12.01)-SWL1-B07-D15 | 2027-07-03 → 2028-01-26 (+207d) | 2027-07-05 → 2028-01-29 (+208d) | resources Standby Diesel Generator Set 150 KVA, 400/230v, 3P, 60Hz in Sound Attenuated Enclosure [1 Item_set]; Skilled labor [0.22 h]; Unskilled Labor [2.18 h]; Excavator-Poclain [0.33 h]; RIC Machine [1.09 h]; Dump Truck [0.76 h] → Standby Diesel Generator Set 150 KVA, 400/230v, 3P, 60Hz in Sound Attenuated Enclosure [1 Item_set]; Skilled labor [0.22 h]; Unskilled Labor [2.18 h]; Excavator-Poclain [0.33 h]; RIC Machine [1.09 h]; Dump Truck [0.8 h] |
| RHD4CSWL1B07D151191 | Automatic Transfer Switch ATS panel 300A - Installation 300A - (B7.26 32 12.02)-SWL1-B07-D15 | 2027-07-06 → 2028-01-30 (+208d) | 2027-07-08 → 2028-02-01 (+208d) | resources Automatic Transfer Switch ATS panel 300A [1 nr]; Skilled labor [0.22 h]; Unskilled Labor [2.18 h]; Excavator-Poclain [0.33 h]; RIC Machine [1.09 h]; Dump Truck [0.76 h] → Automatic Transfer Switch ATS panel 300A [1 nr]; Skilled labor [0.22 h]; Unskilled Labor [2.18 h]; Excavator-Poclain [0.33 h]; RIC Machine [1.09 h]; Dump Truck [0.8 h] |
| 75 | **RHD4-02-002-SWL1-B07-SURGE VESSEL** | 2027-07-10 → 2028-02-02 (+207d) | 2027-08-02 → 2028-03-01 (+212d) |  |
| 76 | **RHD4-02-002-SWL1-B07-SURGE VESSEL -Concrete works** | 2027-07-10 → 2028-02-02 (+207d) | 2027-08-02 → 2028-03-01 (+212d) |  |
| RHD4CSWL1B07D031194 | Lean Concrete 100mm - (B7.03 00 00 .01)-SWL1-B07-D03 | 2027-07-10 → 2028-02-02 (+207d) | 2027-07-11 → 2028-02-03 (+207d) |  |
| RHD4CSWL1B07D031195 | Water proofing membrance Bituminous Sheet - (B7.07 13 13.01)-SWL1-B07-D03 | 2027-07-12 → 2028-02-05 (+208d) | 2027-07-14 → 2028-02-07 (+208d) | resources Bituminous Sheet Waterproofing (2 layers of waterproofing bitumenous membrane 4mm below footings) [26 m2]; Skilled labor [5.77 h]; Unskilled Labor [52.16 h]; Excavator-Poclain [9.04 h]; RIC Machine [27.23 h]; Dump Truck [18.19 h] → Bituminous Sheet Waterproofing (2 layers of waterproofing bitumenous membrane 4mm below footings) [26 m2]; Skilled labor [5.77 h]; Unskilled Labor [52.16 h]; Excavator-Poclain [9.04 h]; RIC Machine [27.2 h]; Dump Truck [18.19 h] |
| RHD4CSWL1B07D031196 | Screed 50mm - (B7.03 00 00 .04)-SWL1-B07-D03 | 2027-07-15 → 2028-02-08 (+208d) | 2027-07-18 → 2028-02-10 (+207d) |  |
| RHD4CSWL1B07D031197 | Steel Fixing - (B7.03 00 00 .05)-SWL1-B07-D03 | 2027-07-19 → 2028-02-12 (+208d) | 2027-07-22 → 2028-02-15 (+208d) |  |
| RHD4CSWL1B07D031198 | Formwork - (B7.03 00 00 .05)-SWL1-B07-D03 | 2027-07-24 → 2028-02-16 (+207d) | 2027-07-27 → 2028-02-20 (+208d) |  |
| RHD4CSWL1B07D031199 | RC Casting - (B7.03 00 00 .05)-SWL1-B07-D03 | 2027-07-28 → 2028-02-21 (+208d) | 2027-07-29 → 2028-02-23 (+209d) |  |
| RHD4CSWL1B07D031200 | Water protection Board membrance Fluid-Applied - (B7.07 14 00.01)-SWL1-B07-D03 | 2027-07-31 → 2028-02-24 (+208d) | 2027-08-02 → 2028-03-01 (+212d) |  |
| 78 | **RHD4-02-002-SWL1-B07-ODOR UNIT** | 2027-06-09 → 2028-01-03 (+208d) | 2027-09-18 → 2028-04-17 (+212d) |  |
| 79 | **RHD4-02-002-SWL1-B07-ODOR UNIT-Concrete works** | 2027-06-09 → 2028-01-03 (+208d) | 2027-08-21 → 2028-03-20 (+212d) |  |
| RHD4CSWL1B07D031204 | Lean Concrete 100mm - (B7.03 00 00 .01)-SWL1-B07-D03 | 2027-06-09 → 2028-01-03 (+208d) | 2027-06-10 → 2028-01-04 (+208d) |  |
| RHD4CSWL1B07D031205 | Water proofing membrance Bituminous Sheet - (B7.07 13 13.01)-SWL1-B07-D03 | 2027-06-12 → 2028-01-05 (+207d) | 2027-06-14 → 2028-01-08 (+208d) | resources Bituminous Sheet Waterproofing (2 layers of waterproofing bitumenous membrane 4mm below footings) [26 m2]; Skilled labor [5.77 h]; Unskilled Labor [78.3 h]; Excavator-Poclain [9.04 h]; RIC Machine [27.23 h]; Dump Truck [18.19 h] → Bituminous Sheet Waterproofing (2 layers of waterproofing bitumenous membrane 4mm below footings) [26 m2]; Skilled labor [5.77 h]; Unskilled Labor [78.3 h]; Excavator-Poclain [9.04 h]; RIC Machine [27.2 h]; Dump Truck [18.19 h] |
| RHD4CSWL1B07D031206 | Screed 50mm - (B7.03 00 00 .04)-SWL1-B07-D03 | 2027-08-03 → 2028-03-02 (+212d) | 2027-08-05 → 2028-03-05 (+213d) |  |
| RHD4CSWL1B07D031207 | Steel Fixing - (B7.03 00 00 .05)-SWL1-B07-D03 | 2027-08-07 → 2028-03-06 (+212d) | 2027-08-10 → 2028-03-09 (+212d) |  |
| RHD4CSWL1B07D031208 | Formwork - (B7.03 00 00 .05)-SWL1-B07-D03 | 2027-08-11 → 2028-03-11 (+213d) | 2027-08-15 → 2028-03-14 (+212d) |  |
| RHD4CSWL1B07D031209 | RC Casting - (B7.03 00 00 .05)-SWL1-B07-D03 | 2027-08-16 → 2028-03-15 (+212d) | 2027-08-17 → 2028-03-16 (+212d) |  |
| RHD4CSWL1B07D031210 | Water protection Board membrance Fluid-Applied - (B7.07 14 00.01)-SWL1-B07-D03 | 2027-08-18 → 2028-03-18 (+213d) | 2027-08-21 → 2028-03-20 (+212d) |  |
| 80 | **RHD4-02-002-SWL1-B07-ODOR UNIT-Odor Control Unit** | 2027-08-18 → 2028-03-18 (+213d) | 2027-09-18 → 2028-04-17 (+212d) |  |
| RHD4CSWL1B07D151211 | Carbon Filter Installation 1110 L/s - (B7.44 30 00.01)-SWL1-B07-D15 | 2027-08-18 → 2028-03-18 (+213d) | 2027-08-22 → 2028-03-21 (+212d) |  |
| RHD4CSWL1B07D151212 | Exhaust Fans Installation - (B7.44 30 00.01)-SWL1-B07-D15 | 2027-08-23 → 2028-03-22 (+212d) | 2027-08-26 → 2028-03-26 (+213d) |  |
| RHD4CSWL1B07D151213 | Chimeny Stack Installation - (B7.44 30 00.01)-SWL1-B07-D15 | 2027-09-05 → 2028-04-04 (+212d) | 2027-09-09 → 2028-04-09 (+213d) |  |
| RHD4CSWL1B07D151214 | Piping Connection 1110 L/s - (B7.44 30 00.01)-SWL1-B07-D15 | 2027-09-11 → 2028-04-10 (+212d) | 2027-09-18 → 2028-04-17 (+212d) |  |
| 315 | **Open Channels - CH** | 2027-01-03 → 2027-05-26 (+143d) | 2027-08-25 → 2028-01-13 (+141d) |  |
| 316 | **RHD4-02-002-Z1-Open Channels - CH-1** | 2027-01-03 → 2027-05-26 (+143d) | 2027-02-28 → 2027-07-20 (+142d) |  |
| 317 | **RHD4-02-002-Z1-Open Channel - ST** | 2027-01-03 → 2027-05-26 (+143d) | 2027-02-28 → 2027-07-20 (+142d) |  |
| 318 | **RHD4-02-002-CH1-(ST)-Open Drain Channel** | 2027-01-03 → 2027-05-26 (+143d) | 2027-02-28 → 2027-07-20 (+142d) |  |
| RHD4CZ1CH1ST1100 | Channels excavation for Open Channel - (B6.31 23 00.01)-Z1-CH1-ST | 2027-01-03 → 2027-05-26 (+143d) | 2027-01-26 → 2027-06-19 (+144d) |  |
| RHD4CZ1CH1ST1300 | Loose riprap on the channels bed for Open Channel - (B6.31 37 00.01)-Z1-CH1-ST | 2027-01-27 → 2027-06-20 (+144d) | 2027-02-09 → 2027-07-03 (+144d) | resources Mason [510.1 h]; Unskilled Labor [255.05 h]; Equipment Opreator [6.43 h]; Excavator-Poclain [6.43 h]; Loose riprap on the channels bed [3513.21 m2] → Mason [510.1 h]; Unskilled Labor [255.05 h]; Equipment Opreator [6.4 h]; Excavator-Poclain [6.4 h]; Loose riprap on the channels bed [3513.21 m2] |
| RHD4CZ1CH1ST1200 | Grouted riprap on side slopes for Open Channel - (B6.31 37 00.02)-Z1-CH1-ST | 2027-02-10 → 2027-07-04 (+144d) | 2027-02-28 → 2027-07-20 (+142d) |  |
| 319 | **RHD4-02-002-Z2-Open Channels - CH-4** | 2027-01-27 → 2027-06-20 (+144d) | 2027-02-11 → 2027-07-05 (+144d) |  |
| 320 | **RHD4-02-002-Z2-Open Channel - ST** | 2027-01-27 → 2027-06-20 (+144d) | 2027-02-11 → 2027-07-05 (+144d) |  |
| 321 | **RHD4-02-002-CH4-(ST)-Open Drain Channel Part 1** | 2027-01-27 → 2027-06-20 (+144d) | 2027-02-11 → 2027-07-05 (+144d) |  |
| RHD4CZ2CH4ST1100 | Channels excavation for Open Channel - (B6.31 23 00.01)-Z2-CH4-ST | 2027-01-27 → 2027-06-20 (+144d) | 2027-02-11 → 2027-07-05 (+144d) |  |
| 1 | **RHD4-02-002-Z3-Open Channels - CH-3** | 2027-02-13 → 2027-07-06 (+143d) | 2027-02-25 → 2027-07-18 (+143d) |  |
| 317 | **RHD4-02-002-Z3-Open Channel - ST** | 2027-02-13 → 2027-07-06 (+143d) | 2027-02-25 → 2027-07-18 (+143d) |  |
| 318 | **RHD4-02-002-CH3-(ST)-Open Drain Channel** | 2027-02-13 → 2027-07-06 (+143d) | 2027-02-25 → 2027-07-18 (+143d) |  |
| RHD4CZ3CH3ST1100 | Channels excavation for Open Channel - (B6.31 23 00.01)-Z3-CH3-ST | 2027-02-13 → 2027-07-06 (+143d) | 2027-02-25 → 2027-07-18 (+143d) |  |
| 3 | **RHD4-02-002-Z4-Open Channels - CH-5** | 2027-02-27 → 2027-07-19 (+142d) | 2027-06-29 → 2027-11-18 (+142d) |  |
| 320 | **RHD4-02-002-Z4-Open Channel - ST** | 2027-02-27 → 2027-07-19 (+142d) | 2027-06-29 → 2027-11-18 (+142d) |  |

| ID | Task | Start | Finish | Duration | Other |
| --- | --- | --- | --- | --- | --- |
| 321 | **RHD4-02-002-CH5-(ST)-Open Drain Channel Part 1** | 2027-02-27 → 2027-07-19 (+142d) | 2027-05-13 → 2027-09-30 (+140d) |  |  |
| RHD4CZ4CH5ST1100 | Channels excavation for Open Channel - (B6.31 23 00.01)-Z4-CH5-ST | 2027-02-27 → 2027-07-19 (+142d) | 2027-03-25 → 2027-08-11 (+139d) |  |  |
| RHD4CZ4CH5ST1200 | Grouted riprap on side slopes for Open Channel - (B6.31 37 00.02)-Z4-CH5-ST | 2027-03-27 → 2027-08-12 (+138d) | 2027-04-19 → 2027-09-05 (+139d) |  | resources Skilled labor [129.27 h]; Unskilled Labor [258.43 h]; Equipment Opreator [387.7 h]; Water Truck [129.27 h]; Dump Truck [258.43 h]; Grouted riprap on side slopes [5933.7 m2] → Skilled labor [129.27 h]; Unskilled Labor [258.4 h]; Equipment Opreator [387.7 h]; Water Truck [129.27 h]; Dump Truck [258.4 h]; Grouted riprap on side slopes [5933.7 m2] |
| RHD4CZ4CH5ST1300 | Loose riprap on the channels bed for Open Channel - (B6.31 37 00.01)-Z4-CH5-ST | 2027-04-20 → 2027-09-06 (+139d) | 2027-05-13 → 2027-09-30 (+140d) |  |  |
| 322 | **RHD4-02-002-CH5-(ST)-Open Drain Channel Part 2** | 2027-03-27 → 2027-08-12 (+138d) | 2027-06-12 → 2027-10-25 (+135d) |  |  |
| RHD4CZ4CH5ST1110 | Channels excavation for Open Channel - (B6.31 23 00.01)-Z4-CH5-ST | 2027-03-27 → 2027-08-12 (+138d) | 2027-04-19 → 2027-09-05 (+139d) |  |  |
| RHD4CZ4CH5ST1210 | Grouted riprap on side slopes for Open Channel - (B6.31 37 00.02)-Z4-CH5-ST | 2027-04-20 → 2027-09-06 (+139d) | 2027-05-13 → 2027-09-30 (+140d) |  | resources Skilled labor [129.27 h]; Unskilled Labor [258.43 h]; Equipment Opreator [387.7 h]; Water Truck [129.27 h]; Dump Truck [258.43 h]; Grouted riprap on side slopes [5933.7 m2] → Skilled labor [129.27 h]; Unskilled Labor [258.4 h]; Equipment Opreator [387.7 h]; Water Truck [129.27 h]; Dump Truck [258.4 h]; Grouted riprap on side slopes [5933.7 m2] |
| RHD4CZ4CH5ST1310 | Loose riprap on the channels bed for Open Channel - (B6.31 37 00.01)-Z4-CH5-ST | 2027-05-19 → 2027-10-02 (+136d) | 2027-06-12 → 2027-10-25 (+135d) |  |  |
| 1 | **RHD4-02-002-CH5-(ST)-Open Drain Channel Part 3** | 2027-04-20 → 2027-09-06 (+139d) | 2027-06-29 → 2027-11-18 (+142d) |  |  |
| RHD4CZ4CH5ST1120 | Channels excavation for Open Channel - (B6.31 23 00.01)-Z4-CH5-ST | 2027-04-20 → 2027-09-06 (+139d) | 2027-05-13 → 2027-09-30 (+140d) |  |  |
| RHD4CZ4CH5ST1220 | Grouted riprap on side slopes for Open Channel - (B6.31 37 00.02)-Z4-CH5-ST | 2027-05-19 → 2027-10-02 (+136d) | 2027-06-12 → 2027-10-25 (+135d) |  | resources Skilled labor [129.27 h]; Unskilled Labor [258.43 h]; Equipment Opreator [387.7 h]; Water Truck [129.27 h]; Dump Truck [258.43 h]; Grouted riprap on side slopes [5933.7 m2] → Skilled labor [129.27 h]; Unskilled Labor [258.4 h]; Equipment Opreator [387.7 h]; Water Truck [129.27 h]; Dump Truck [258.4 h]; Grouted riprap on side slopes [5933.7 m2] |
| RHD4CZ4CH5ST1320 | Loose riprap on the channels bed for Open Channel - (B6.31 37 00.01)-Z4-CH5-ST | 2027-06-13 → 2027-10-26 (+135d) | 2027-06-29 → 2027-11-18 (+142d) | 15d → 21d |  |
| 2 | **RHD4-02-002-Z5-Open Channels - CH-2** | 2027-05-19 → 2027-10-02 (+136d) | 2027-05-30 → 2027-10-12 (+135d) |  |  |
| 317 | **RHD4-02-002-Z5-Open Channel - ST** | 2027-05-19 → 2027-10-02 (+136d) | 2027-05-30 → 2027-10-12 (+135d) |  |  |
| 318 | **RHD4-02-002-CH2-(ST)-Open Drain Channel** | 2027-05-19 → 2027-10-02 (+136d) | 2027-05-30 → 2027-10-12 (+135d) |  |  |
| RHD4CZ5CH2ST1100 | Channels excavation for Open Channel - (B6.31 23 00.01)-Z5-CH2-ST | 2027-05-19 → 2027-10-02 (+136d) | 2027-05-30 → 2027-10-12 (+135d) |  |  |
| 4 | **RHD4-02-002-Z6-Open Channels - CH-6** | 2027-05-31 → 2027-10-13 (+135d) | 2027-08-25 → 2028-01-13 (+141d) |  |  |
| 320 | **RHD4-02-002-Z6-Open Channel - ST** | 2027-05-31 → 2027-10-13 (+135d) | 2027-08-25 → 2028-01-13 (+141d) |  |  |
| 321 | **RHD4-02-002-CH6-(ST)-Open Drain Channel Part 1** | 2027-05-31 → 2027-10-13 (+135d) | 2027-06-22 → 2027-11-04 (+135d) |  |  |
| RHD4CZ6CH6ST1100 | Channels excavation for Open Channel - (B6.31 23 00.01)-Z6-CH6-ST | 2027-05-31 → 2027-10-13 (+135d) | 2027-06-22 → 2027-11-04 (+135d) |  | resources Skilled labor [107.16 h]; Unskilled Labor [107.16 h]; Equipment Opreator [428.54 h]; Excavator-Poclain [107.16 h]; Water Truck [107.16 h]; Dump Truck [214.21 h]; Channels excavation in all type of soil for any depth [16723.1 m3] → Skilled labor [107.2 h]; Unskilled Labor [107.2 h]; Equipment Opreator [428.54 h]; Excavator-Poclain [107.2 h]; Water Truck [107.2 h]; Dump Truck [214.21 h]; Channels excavation in all type of soil for any depth [16723.1 m3] |
| 322 | **RHD4-02-002-CH6-(ST)-Open Drain Channel Part 2** | 2027-06-23 → 2027-11-06 (+136d) | 2027-07-15 → 2027-11-28 (+136d) |  |  |
| RHD4CZ6CH6ST1110 | Channels excavation for Open Channel - (B6.31 23 00.01)-Z6-CH6-ST | 2027-06-23 → 2027-11-06 (+136d) | 2027-07-15 → 2027-11-28 (+136d) |  | resources Skilled labor [107.16 h]; Unskilled Labor [107.16 h]; Equipment Opreator [428.54 h]; Excavator-Poclain [107.16 h]; Water Truck [107.16 h]; Dump Truck [214.21 h]; Channels excavation in all type of soil for any depth [16723.1 m3] → Skilled labor [107.2 h]; Unskilled Labor [107.2 h]; Equipment Opreator [428.54 h]; Excavator-Poclain [107.2 h]; Water Truck [107.2 h]; Dump Truck [214.21 h]; Channels excavation in all type of soil for any depth [16723.1 m3] |
| 1 | **RHD4-02-002-CH6-(ST)-Open Drain Channel Part 3** | 2027-07-17 → 2027-11-29 (+135d) | 2027-08-08 → 2027-12-21 (+135d) |  |  |
| RHD4CZ6CH6ST1120 | Channels excavation for Open Channel - (B6.31 23 00.01)-Z6-CH6-ST | 2027-07-17 → 2027-11-29 (+135d) | 2027-08-08 → 2027-12-21 (+135d) |  | resources Skilled labor [107.16 h]; Unskilled Labor [107.16 h]; Equipment Opreator [428.54 h]; Excavator-Poclain [107.16 h]; Water Truck [107.16 h]; Dump Truck [214.21 h]; Channels excavation in all type of soil for any depth [16723.1 m3] → Skilled labor [107.2 h]; Unskilled Labor [107.2 h]; Equipment Opreator [428.54 h]; Excavator-Poclain [107.2 h]; Water Truck [107.2 h]; Dump Truck [214.21 h]; Channels excavation in all type of soil for any depth [16723.1 m3] |
| 2 | **RHD4-02-002-CH6-(ST)-Open Drain Channel Part 4** | 2027-08-09 → 2027-12-22 (+135d) | 2027-08-25 → 2028-01-13 (+141d) |  |  |
| RHD4CZ6CH6ST1130 | Channels excavation for Open Channel - (B6.31 23 00.01)-Z6-CH6-ST | 2027-08-09 → 2027-12-22 (+135d) | 2027-08-25 → 2028-01-13 (+141d) | 15d → 20d | resources Skilled labor [107.16 h]; Unskilled Labor [107.16 h]; Equipment Opreator [428.54 h]; Excavator-Poclain [107.16 h]; Water Truck [107.16 h]; Dump Truck [214.21 h]; Channels excavation in all type of soil for any depth [16723.1 m3] → Skilled labor [107.2 h]; Unskilled Labor [107.2 h]; Equipment Opreator [428.54 h]; Excavator-Poclain [107.2 h]; Water Truck [107.2 h]; Dump Truck [214.21 h]; Channels excavation in all type of soil for any depth [16723.1 m3] |
| 2 | **Provisional Sum** | 2028-05-20 → 2029-01-15 (+240d) | 2028-05-28 → 2029-01-25 (+242d) |  |  |
| A1000 | De-scoping | 2028-05-20 → 2029-01-15 (+240d) | 2028-05-28 → 2029-01-25 (+242d) | 9d → 11d |  |
| 9216 | **RHD4-02-002-Final Testing and Commissioning - FT** | 2026-12-28 → 2027-06-14 (+168d) | 2028-02-20 → 2028-11-04 (+258d) |  |  |
| 9217 | **RHD4-02-002-Final Testing and Commissioning - FT-Z1** | 2027-03-14 → 2027-10-09 (+209d) | 2028-01-20 → 2028-08-19 (+212d) |  |  |
| RHD4GNLVZ1FT1500 | Final Testing and Commissioning for Low Voltage Network - FT-Z1-LV | 2027-03-14 → 2027-10-09 (+209d) | 2027-04-17 → 2027-11-11 (+208d) |  |  |
| RHD4GNSLZ1FT1600 | Final Testing and Commissioning for Street Lighting Network - FT-Z1-SL | 2027-04-11 → 2027-11-06 (+209d) | 2027-05-19 → 2027-12-09 (+204d) |  |  |
| RHD4GNCCTVZ1FT2000 | Final Testing and Commissioning for Security "CCTV" Network - FT-Z1-CCTV | 2027-06-23 → 2028-01-13 (+204d) | 2027-07-27 → 2028-02-16 (+204d) |  |  |
| RHD4GNTCZ1FT1800 | Final Testing and Commissioning for Telecommunications Network - FT-Z1-TC | 2027-10-02 → 2028-04-26 (+207d) | 2027-11-04 → 2028-06-03 (+212d) |  |  |
| RHD4GNICTZ1FT1900 | Final Testing and Commissioning for ICT Network - FT-Z1-ICT | 2027-11-06 → 2028-06-04 (+211d) | 2027-12-09 → 2028-07-08 (+212d) |  |  |
| RHD4GNSTZ1FT1000 | Final Testing and Commissioning for Storm Network - FT-Z1-ST | 2027-11-06 → 2028-06-04 (+211d) | 2027-11-18 → 2028-06-17 (+212d) |  |  |
| RHD4GNIRRZ1FT1300 | Final Testing and Commissioning for Irrigation Network - FT-Z1-IRR | 2027-11-20 → 2028-06-18 (+211d) | 2027-12-23 → 2028-07-22 (+212d) |  |  |
| RHD4GNMVZ1FT1400 | Final Testing and Commissioning for Medium Voltage Network - FT-Z1-MV | 2027-11-20 → 2028-06-18 (+211d) | 2027-12-23 → 2028-07-22 (+212d) |  |  |
| RHD4GNPTZ1FT1200 | Final Testing and Commissioning for Potable Water Network - FT-Z1-PT | 2027-11-20 → 2028-06-18 (+211d) | 2027-12-23 → 2028-07-22 (+212d) |  |  |
| RHD4GNSWZ1FT1100 | Final Testing and Commissioning for Sewage Network - FT-Z1-SW | 2027-12-18 → 2028-07-16 (+211d) | 2028-01-20 → 2028-08-19 (+212d) |  |  |
| 9218 | **RHD4-02-002-Final Testing and Commissioning - FT-Z2** | 2026-12-28 → 2027-06-14 (+168d) | 2027-12-30 → 2028-07-29 (+212d) |  |  |
| RHD4GNLVZ2FT1500 | Final Testing and Commissioning for Low Voltage Network - FT-Z2-LV | 2026-12-28 → 2027-06-14 (+168d) | 2027-01-31 → 2027-07-18 (+168d) |  |  |
| RHD4GNSLZ2FT1600 | Final Testing and Commissioning for Street Lighting Network - FT-Z2-SL | 2027-04-25 → 2027-11-13 (+202d) | 2027-06-02 → 2027-12-16 (+197d) |  |  |
| RHD4GNCCTVZ2FT2000 | Final Testing and Commissioning for Security "CCTV" Network - FT-Z2-CCTV | 2027-08-29 → 2028-02-10 (+165d) | 2027-10-03 → 2028-03-20 (+169d) |  |  |
| RHD4GNICTZ2FT1900 | Final Testing and Commissioning for ICT Network - FT-Z2-ICT | 2027-11-06 → 2028-06-04 (+211d) | 2027-11-30 → 2028-07-08 (+221d) | 22d → 30d |  |
| RHD4GNSTZ2FT1000 | Final Testing and Commissioning for Storm Network - FT-Z2-ST | 2027-11-06 → 2028-06-04 (+211d) | 2027-11-18 → 2028-06-17 (+212d) |  |  |
| RHD4GNTCZ2FT1800 | Final Testing and Commissioning for Telecommunications Network - FT-Z2-TC | 2027-11-06 → 2028-06-04 (+211d) | 2027-12-09 → 2028-07-08 (+212d) |  |  |
| RHD4GNIRRZ2FT1300 | Final Testing and Commissioning for Irrigation Network - FT-Z2-IRR | 2027-11-20 → 2028-06-18 (+211d) | 2027-12-23 → 2028-07-22 (+212d) |  |  |
| RHD4GNMVZ2FT1400 | Final Testing and Commissioning for Medium Voltage Network - FT-Z2-MV | 2027-11-20 → 2028-06-18 (+211d) | 2027-12-23 → 2028-07-22 (+212d) |  |  |
| RHD4GNPTZ2FT1200 | Final Testing and Commissioning for Potable Water Network - FT-Z2-PT | 2027-11-20 → 2028-06-18 (+211d) | 2027-12-23 → 2028-07-22 (+212d) |  |  |
| RHD4GNSWZ2FT1100 | Final Testing and Commissioning for Sewage Network - FT-Z2-SW | 2027-12-18 → 2028-07-16 (+211d) | 2027-12-30 → 2028-07-29 (+212d) |  |  |
| 9219 | **RHD4-02-002-Final Testing and Commissioning - FT-Z3** | 2027-05-25 → 2027-12-16 (+205d) | 2028-02-20 → 2028-11-04 (+258d) |  |  |
| RHD4GNLVZ3FT1500 | Final Testing and Commissioning for Low Voltage Network - FT-Z3-LV | 2027-05-25 → 2027-12-16 (+205d) | 2027-06-10 → 2028-01-02 (+206d) |  |  |
| RHD4GNSTZ3FT1000 | Final Testing and Commissioning for Storm Network - FT-Z3-ST | 2027-11-06 → 2028-06-04 (+211d) | 2027-11-18 → 2028-06-17 (+212d) |  |  |
| RHD4GNIRRZ3FT1300 | Final Testing and Commissioning for Irrigation Network - FT-Z3-IRR | 2027-11-20 → 2028-06-18 (+211d) | 2027-12-23 → 2028-07-22 (+212d) |  |  |
| RHD4GNMVZ3FT1400 | Final Testing and Commissioning for Medium Voltage Network - FT-Z3-MV | 2027-11-20 → 2028-06-18 (+211d) | 2027-12-23 → 2028-07-22 (+212d) |  |  |
| RHD4GNPTZ3FT1200 | Final Testing and Commissioning for Potable Water Network - FT-Z3-PT | 2027-11-20 → 2028-06-18 (+211d) | 2027-12-23 → 2028-07-22 (+212d) |  |  |
| RHD4GNTCZ3FT1800 | Final Testing and Commissioning for Telecommunications Network - FT-Z3-TC | 2027-12-02 → 2028-07-09 (+220d) | 2028-01-05 → 2028-08-12 (+220d) |  |  |
| RHD4GNSLZ3FT1600 | Final Testing and Commissioning for Street Lighting Network - FT-Z3-SL | 2027-12-12 → 2028-07-13 (+214d) | 2028-01-15 → 2028-08-16 (+214d) |  |  |
| RHD4GNSWZ3FT1100 | Final Testing and Commissioning for Sewage Network - FT-Z3-SW | 2027-12-18 → 2028-07-16 (+211d) | 2027-12-30 → 2028-07-29 (+212d) |  |  |
| RHD4GNCCTVZ3FT2000 | Final Testing and Commissioning for Security "CCTV" Network - FT-Z3-CCTV | 2027-12-13 → 2028-08-26 (+257d) | 2028-01-16 → 2028-09-30 (+258d) |  |  |
| RHD4GNICTZ3FT1900 | Final Testing and Commissioning for ICT Network - FT-Z3-ICT | 2028-01-17 → 2028-10-01 (+258d) | 2028-02-20 → 2028-11-04 (+258d) |  |  |
| 9220 | **RHD4-02-002-Final Testing and Commissioning - FT-Z4** | 2027-04-13 → 2027-10-09 (+179d) | 2027-12-23 → 2028-07-22 (+212d) |  |  |
| RHD4GNLVZ4FT1500 | Final Testing and Commissioning for Low Voltage Network - FT-Z4-LV | 2027-04-13 → 2027-10-09 (+179d) | 2027-05-22 → 2027-11-11 (+173d) |  |  |
| RHD4GNSLZ4FT1600 | Final Testing and Commissioning for Street Lighting Network - FT-Z4-SL | 2027-05-20 → 2027-11-16 (+180d) | 2027-06-23 → 2027-12-20 (+180d) |  |  |
| RHD4GNTCZ4FT1800 | Final Testing and Commissioning for Telecommunications Network - FT-Z4-TC | 2027-06-10 → 2027-12-07 (+180d) | 2027-07-14 → 2028-01-10 (+180d) |  |  |
| RHD4GNCCTVZ4FT2000 | Final Testing and Commissioning for Security "CCTV" Network - FT-Z4-CCTV | 2027-07-06 → 2028-01-02 (+180d) | 2027-08-09 → 2028-02-05 (+180d) |  |  |
| RHD4GNICTZ4FT1900 | Final Testing and Commissioning for ICT Network - FT-Z4-ICT | 2027-11-06 → 2028-06-04 (+211d) | 2027-12-09 → 2028-07-08 (+212d) |  |  |
| RHD4GNSTZ4FT1000 | Final Testing and Commissioning for Storm Network - FT-Z4-ST | 2027-11-06 → 2028-06-04 (+211d) | 2027-11-18 → 2028-06-17 (+212d) |  |  |
| RHD4GNSWZ4FT1100 | Final Testing and Commissioning for Sewage Network - FT-Z4-SW | 2027-11-06 → 2028-06-04 (+211d) | 2027-11-18 → 2028-06-17 (+212d) |  |  |

| ID | Task | Start | Finish | Duration |
| --- | --- | --- | --- | --- |
| RHD4GNIRRZ4FT1300 | Final Testing and Commissioning for Irrigation Network - FT-Z4-IRR | 2027-11-20 → 2028-06-18 (+211d) | 2027-12-23 → 2028-07-22 (+212d) |  |
| RHD4GNMVZ4FT1400 | Final Testing and Commissioning for Medium Voltage Network - FT-Z4-MV | 2027-11-20 → 2028-06-18 (+211d) | 2027-12-23 → 2028-07-22 (+212d) |  |
| RHD4GNPTZ4FT1200 | Final Testing and Commissioning for Potable Water Network - FT-Z4-PT | 2027-11-20 → 2028-06-18 (+211d) | 2027-12-23 → 2028-07-22 (+212d) |  |
| 9221 | **RHD4-02-002-Final Testing and Commissioning - FT-Z5** | 2027-04-01 → 2027-09-20 (+172d) | 2027-12-23 → 2028-07-22 (+212d) |  |
| RHD4GNLVZ5FT1500 | Final Testing and Commissioning for Low Voltage Network - FT-Z5-LV | 2027-04-01 → 2027-09-20 (+172d) | 2027-05-05 → 2027-10-25 (+173d) |  |
| RHD4GNSLZ5FT1600 | Final Testing and Commissioning for Street Lighting Network - FT-Z5-SL | 2027-07-10 → 2027-12-25 (+168d) | 2027-08-12 → 2028-01-27 (+168d) |  |
| RHD4GNTCZ5FT1800 | Final Testing and Commissioning for Telecommunications Network - FT-Z5-TC | 2027-08-26 → 2028-03-22 (+209d) | 2027-09-30 → 2028-04-25 (+208d) |  |
| RHD4GNICTZ5FT1900 | Final Testing and Commissioning for ICT Network - FT-Z5-ICT | 2027-11-06 → 2028-06-04 (+211d) | 2027-12-09 → 2028-07-08 (+212d) |  |
| RHD4GNSTZ5FT1000 | Final Testing and Commissioning for Storm Network - FT-Z5-ST | 2027-11-06 → 2028-06-04 (+211d) | 2027-11-18 → 2028-06-17 (+212d) |  |
| RHD4GNCCTVZ5FT2000 | Final Testing and Commissioning for Security "CCTV" Network - FT-Z5-CCTV | 2027-11-17 → 2028-06-15 (+211d) | 2027-12-21 → 2028-07-19 (+211d) |  |
| RHD4GNIRRZ5FT1300 | Final Testing and Commissioning for Irrigation Network - FT-Z5-IRR | 2027-11-20 → 2028-06-18 (+211d) | 2027-12-23 → 2028-07-22 (+212d) |  |
| RHD4GNMVZ5FT1400 | Final Testing and Commissioning for Medium Voltage Network - FT-Z5-MV | 2027-11-20 → 2028-06-18 (+211d) | 2027-12-23 → 2028-07-22 (+212d) |  |
| RHD4GNPTZ5FT1200 | Final Testing and Commissioning for Potable Water Network - FT-Z5-PT | 2027-11-20 → 2028-06-18 (+211d) | 2027-12-23 → 2028-07-22 (+212d) |  |
| RHD4GNSWZ5FT1100 | Final Testing and Commissioning for Sewage Network - FT-Z5-SW | 2027-11-20 → 2028-06-18 (+211d) | 2027-12-02 → 2028-07-01 (+212d) |  |
| 9222 | **RHD4-02-002-Final Testing and Commissioning - FT-Z6** | 2027-03-15 → 2027-10-02 (+201d) | 2027-12-23 → 2028-07-22 (+212d) |  |
| RHD4GNLVZ6FT1500 | Final Testing and Commissioning for Low Voltage Network - FT-Z6-LV | 2027-03-15 → 2027-10-02 (+201d) | 2027-04-18 → 2027-11-04 (+200d) |  |
| RHD4GNSLZ6FT1600 | Final Testing and Commissioning for Street Lighting Network - FT-Z6-SL | 2027-04-12 → 2027-10-30 (+201d) | 2027-05-20 → 2027-12-02 (+196d) |  |
| RHD4GNTCZ6FT1800 | Final Testing and Commissioning for Telecommunications Network - FT-Z6-TC | 2027-05-10 → 2027-11-23 (+197d) | 2027-06-17 → 2027-12-27 (+193d) |  |
| RHD4GNCCTVZ6FT2000 | Final Testing and Commissioning for Security "CCTV" Network - FT-Z6-CCTV | 2027-06-19 → 2028-01-01 (+196d) | 2027-07-22 → 2028-02-03 (+196d) |  |
| RHD4GNICTZ6FT1900 | Final Testing and Commissioning for ICT Network - FT-Z6-ICT | 2027-11-06 → 2028-06-04 (+211d) | 2027-12-09 → 2028-07-08 (+212d) |  |
| RHD4GNSTZ6FT1000 | Final Testing and Commissioning for Storm Network - FT-Z6-ST | 2027-11-06 → 2028-06-04 (+211d) | 2027-11-18 → 2028-06-17 (+212d) |  |
| RHD4GNIRRZ6FT1300 | Final Testing and Commissioning for Irrigation Network - FT-Z6-IRR | 2027-11-20 → 2028-06-18 (+211d) | 2027-12-23 → 2028-07-22 (+212d) |  |
| RHD4GNMVZ6FT1400 | Final Testing and Commissioning for Medium Voltage Network - FT-Z6-MV | 2027-11-20 → 2028-06-18 (+211d) | 2027-12-23 → 2028-07-22 (+212d) |  |
| RHD4GNPTZ6FT1200 | Final Testing and Commissioning for Potable Water Network - FT-Z6-PT | 2027-11-20 → 2028-06-18 (+211d) | 2027-12-09 → 2028-07-08 (+212d) |  |
| RHD4GNSWZ6FT1100 | Final Testing and Commissioning for Sewage Network - FT-Z6-SW | 2027-11-20 → 2028-06-18 (+211d) | 2027-12-02 → 2028-07-01 (+212d) |  |
| 9223 | **RHD4-02-002-Final Testing and Commissioning - FT-Z7** | 2027-06-09 → 2027-12-08 (+182d) | 2027-12-23 → 2028-07-22 (+212d) |  |
| RHD4GNLVZ7FT1500 | Final Testing and Commissioning for Low Voltage Network - FT-Z7-LV | 2027-06-09 → 2027-12-08 (+182d) | 2027-07-13 → 2028-01-11 (+182d) |  |
| RHD4GNSLZ7FT1600 | Final Testing and Commissioning for Street Lighting Network - FT-Z7-SL | 2027-07-14 → 2028-01-12 (+182d) | 2027-08-08 → 2028-02-15 (+191d) | 22d → 30d |
| RHD4GNTCZ7FT1800 | Final Testing and Commissioning for Telecommunications Network - FT-Z7-TC | 2027-10-02 → 2028-04-26 (+207d) | 2027-11-04 → 2028-06-03 (+212d) |  |
| RHD4GNCCTVZ7FT2000 | Final Testing and Commissioning for Security "CCTV" Network - FT-Z7-CCTV | 2027-10-06 → 2028-04-30 (+207d) | 2027-11-09 → 2028-06-06 (+210d) |  |
| RHD4GNICTZ7FT1900 | Final Testing and Commissioning for ICT Network - FT-Z7-ICT | 2027-11-06 → 2028-06-04 (+211d) | 2027-12-09 → 2028-07-08 (+212d) |  |
| RHD4GNSTZ7FT1000 | Final Testing and Commissioning for Storm Network - FT-Z7-ST | 2027-11-06 → 2028-06-04 (+211d) | 2027-11-18 → 2028-06-17 (+212d) |  |
| RHD4GNIRRZ7FT1300 | Final Testing and Commissioning for Irrigation Network - FT-Z7-IRR | 2027-11-20 → 2028-06-18 (+211d) | 2027-12-23 → 2028-07-22 (+212d) |  |
| RHD4GNMVZ7FT1400 | Final Testing and Commissioning for Medium Voltage Network - FT-Z7-MV | 2027-11-20 → 2028-06-18 (+211d) | 2027-12-23 → 2028-07-22 (+212d) |  |
| RHD4GNPTZ7FT1200 | Final Testing and Commissioning for Potable Water Network - FT-Z7-PT | 2027-11-20 → 2028-06-18 (+211d) | 2027-12-23 → 2028-07-22 (+212d) |  |
| RHD4GNSWZ7FT1100 | Final Testing and Commissioning for Sewage Network - FT-Z7-SW | 2027-12-04 → 2028-07-02 (+211d) | 2027-12-16 → 2028-07-15 (+212d) |  |
| 9224 | **RHD4-02-002-Final Testing and Commissioning - FT-Z8** | 2027-04-22 → 2027-09-14 (+145d) | 2027-12-23 → 2028-07-22 (+212d) |  |
| RHD4GNLVZ8FT1500 | Final Testing and Commissioning for Low Voltage Network - FT-Z8-LV | 2027-04-22 → 2027-09-14 (+145d) | 2027-05-31 → 2027-10-19 (+141d) |  |
| RHD4GNSLZ8FT1600 | Final Testing and Commissioning for Street Lighting Network - FT-Z8-SL | 2027-06-12 → 2027-10-30 (+140d) | 2027-07-15 → 2027-12-02 (+140d) |  |
| RHD4GNCCTVZ8FT2000 | Final Testing and Commissioning for Security "CCTV" Network - FT-Z8-CCTV | 2027-10-11 → 2028-03-02 (+143d) | 2027-11-14 → 2028-04-05 (+143d) |  |
| RHD4GNTCZ8FT1800 | Final Testing and Commissioning for Telecommunications Network - FT-Z8-TC | 2027-10-02 → 2028-04-26 (+207d) | 2027-11-04 → 2028-06-03 (+212d) |  |
| RHD4GNICTZ8FT1900 | Final Testing and Commissioning for ICT Network - FT-Z8-ICT | 2027-11-06 → 2028-06-04 (+211d) | 2027-12-09 → 2028-07-08 (+212d) |  |
| RHD4GNSTZ8FT1000 | Final Testing and Commissioning for Storm Network - FT-Z8-ST | 2027-11-06 → 2028-06-04 (+211d) | 2027-11-18 → 2028-06-17 (+212d) |  |
| RHD4GNIRRZ8FT1300 | Final Testing and Commissioning for Irrigation Network - FT-Z8-IRR | 2027-11-20 → 2028-06-18 (+211d) | 2027-12-23 → 2028-07-22 (+212d) |  |
| RHD4GNMVZ8FT1400 | Final Testing and Commissioning for Medium Voltage Network - FT-Z8-MV | 2027-11-20 → 2028-06-18 (+211d) | 2027-12-23 → 2028-07-22 (+212d) |  |
| RHD4GNPTZ8FT1200 | Final Testing and Commissioning for Potable Water Network - FT-Z8-PT | 2027-11-20 → 2028-06-18 (+211d) | 2027-12-23 → 2028-07-22 (+212d) |  |
| RHD4GNSWZ8FT1100 | Final Testing and Commissioning for Sewage Network - FT-Z8-SW | 2027-12-04 → 2028-07-02 (+211d) | 2027-12-16 → 2028-07-15 (+212d) |  |
| 9225 | **RHD4-02-002-Final Testing and Commissioning - FT-Z9** | 2027-07-08 → 2027-12-26 (+171d) | 2028-01-06 → 2028-08-21 (+228d) |  |
| RHD4GNLVZ9FT1500 | Final Testing and Commissioning for Low Voltage Network - FT-Z9-LV | 2027-07-08 → 2027-12-26 (+171d) | 2027-08-11 → 2028-01-29 (+171d) |  |
| RHD4GNSLZ9FT1600 | Final Testing and Commissioning for Street Lighting Network - FT-Z9-SL | 2027-07-11 → 2027-12-28 (+170d) | 2027-08-14 → 2028-01-31 (+170d) |  |
| RHD4GNTCZ9FT1800 | Final Testing and Commissioning for Telecommunications Network - FT-Z9-TC | 2027-09-06 → 2028-03-11 (+187d) | 2027-10-11 → 2028-04-13 (+185d) |  |
| RHD4GNSTZ9FT1000 | Final Testing and Commissioning for Storm Network - FT-Z9-ST | 2027-11-06 → 2028-06-04 (+211d) | 2027-11-18 → 2028-06-17 (+212d) |  |
| RHD4GNIRRZ9FT1300 | Final Testing and Commissioning for Irrigation Network - FT-Z9-IRR | 2027-11-20 → 2028-06-18 (+211d) | 2027-12-23 → 2028-07-22 (+212d) |  |
| RHD4GNMVZ9FT1400 | Final Testing and Commissioning for Medium Voltage Network - FT-Z9-MV | 2027-11-20 → 2028-06-18 (+211d) | 2027-12-23 → 2028-07-22 (+212d) |  |
| RHD4GNPTZ9FT1200 | Final Testing and Commissioning for Potable Water Network - FT-Z9-PT | 2027-11-20 → 2028-06-18 (+211d) | 2027-12-23 → 2028-07-22 (+212d) |  |
| RHD4GNICTZ9FT1900 | Final Testing and Commissioning for ICT Network - FT-Z9-ICT | 2027-11-06 → 2028-06-27 (+234d) | 2027-12-09 → 2028-07-31 (+235d) |  |
| RHD4GNSWZ9FT1100 | Final Testing and Commissioning for Sewage Network - FT-Z9-SW | 2027-12-04 → 2028-07-02 (+211d) | 2027-12-16 → 2028-07-15 (+212d) |  |
| RHD4GNCCTVZ9FT2000 | Final Testing and Commissioning for Security "CCTV" Network - FT-Z9-CCTV | 2027-12-15 → 2028-07-30 (+228d) | 2028-01-06 → 2028-08-21 (+228d) |  |
| 1 | **RHD4-02-002-Final Testing and Commissioning - FT-LFTS** | 2027-09-19 → 2028-04-18 (+212d) | 2028-01-03 → 2028-08-16 (+226d) |  |
| RHD4GNSWL1LFTSFT1000 | Final Testing and Commissioning for Sewage Lift Station 1 - FT-LFTS-SWL1 | 2027-09-19 → 2028-04-18 (+212d) | 2027-10-24 → 2028-05-25 (+214d) |  |
| RHD4GNSTL1LFTSFT1200 | Final Testing and Commissioning for Storm Lift Station 1 - FT-LFTS-STL1 | 2027-12-27 → 2028-08-09 (+226d) | 2028-01-03 → 2028-08-16 (+226d) |  |
| 9226 | **RHD4-02-002-Close Out - HO** | 2027-05-06 → 2027-10-26 (+173d) | 2028-05-30 → 2029-01-25 (+240d) |  |
| 9227 | **RHD4-02-002-As Built Drawings - AS** | 2027-05-06 → 2027-10-26 (+173d) | 2028-05-30 → 2029-01-24 (+239d) |  |
| 9228 | **RHD4-02-002-As Built Drawing Submittals** | 2027-05-06 → 2027-10-26 (+173d) | 2028-05-10 → 2029-01-15 (+250d) |  |
| 9229 | **RHD4-02-002-As Built Drawing Submittals-Z1** | 2027-06-30 → 2028-01-22 (+206d) | 2028-04-09 → 2028-12-18 (+253d) |  |
| RHD4HOASZ1SUBLV160 | Prepare and Submit As-Built Drawings for Low Voltage Network for LV-Z1-SUB | 2027-06-30 → 2028-01-22 (+206d) | 2027-07-08 → 2028-01-30 (+206d) |  |
| RHD4HOASZ1SUBST110 | Prepare and Submit As-Built Drawings for Storm Water Network for ST-Z1-SUB | 2027-12-18 → 2028-07-16 (+211d) | 2028-01-02 → 2028-07-31 (+211d) |  |
| RHD4HOASZ1SUBTC190 | Prepare and Submit As-Built Drawings for Telecommunications Network for TC-Z1-SUB | 2028-01-20 → 2028-08-31 (+224d) | 2028-02-06 → 2028-09-17 (+224d) |  |
| RHD4HOASZ1SUBIRR140 | Prepare and Submit As-Built Drawings for Irrigation Network for IRR-Z1-SUB | 2028-02-09 → 2028-09-07 (+211d) | 2028-02-20 → 2028-09-18 (+211d) |  |
| RHD4HOASZ1SUBMV150 | Prepare and Submit As-Built Drawings for Medium Voltage Network for MV-Z1-SUB | 2028-02-09 → 2028-09-07 (+211d) | 2028-02-17 → 2028-09-16 (+212d) |  |

| ID | Task | Start | Finish |
| --- | --- | --- | --- |
| RHD4HOASZ1SUBEW100 | Prepare and Submit As-Built Drawings for Road Plans and Profile for EW-Z1-SUB | 2028-02-10 → 2028-09-09 (+212d) | 2028-02-20 → 2028-09-18 (+211d) |
| RHD4HOASZ1SUBPT130 | Prepare and Submit As-Built Drawings for Potable Water Network for PT-Z1-SUB | 2028-02-14 → 2028-09-12 (+211d) | 2028-02-23 → 2028-09-20 (+210d) |
| RHD4HOASZ1SUBSW120 | Prepare and Submit As-Built Drawings for Sewage Network for SW-Z1-SUB | 2028-03-01 → 2028-09-25 (+208d) | 2028-03-09 → 2028-10-03 (+208d) |
| RHD4HOASZ1SUBSL170 | Prepare and Submit As-Built Drawings for Street Lighting Network for SL-Z1-SUB | 2028-02-20 → 2028-09-30 (+223d) | 2028-03-12 → 2028-10-16 (+218d) |
| RHD4HOASZ1SUBCCTV210 | Prepare and Submit As-Built Drawings for Security Network for CCTV-Z1-SUB | 2028-02-07 → 2028-10-19 (+255d) | 2028-02-15 → 2028-10-28 (+256d) |
| RHD4HOASZ1SUBRD220 | Prepare and Submit As-Built Drawings for Road Works( KERBING AND PAVEMENT ) for RD-Z1-SUB | 2028-03-11 → 2028-11-19 (+253d) | 2028-03-16 → 2028-11-25 (+254d) |
| RHD4HOASZ1SUBICT200 | Prepare and Submit As-Built Drawings for Information and Communication Technologies Network for ICT-Z1-SUB | 2028-04-01 → 2028-12-10 (+253d) | 2028-04-09 → 2028-12-18 (+253d) |
| 9230 | **RHD4-02-002-As Built Drawing Submittals-Z2** | 2027-06-21 → 2028-01-12 (+205d) | 2028-03-30 → 2028-12-09 (+254d) |
| RHD4HOASZ2SUBLV160 | Prepare and Submit As-Built Drawings for Low Voltage Network for LV-Z2-SUB | 2027-06-21 → 2028-01-12 (+205d) | 2027-06-29 → 2028-01-20 (+205d) |
| RHD4HOASZ2SUBST110 | Prepare and Submit As-Built Drawings for Storm Water Network for ST-Z2-SUB | 2027-12-04 → 2028-07-02 (+211d) | 2027-12-16 → 2028-07-15 (+212d) |
| RHD4HOASZ2SUBTC190 | Prepare and Submit As-Built Drawings for Telecommunications Network for TC-Z2-SUB | 2028-01-13 → 2028-08-24 (+224d) | 2028-01-19 → 2028-08-30 (+224d) |
| RHD4HOASZ2SUBEW100 | Prepare and Submit As-Built Drawings for Road Plans and Profile for EW-Z2-SUB | 2028-01-30 → 2028-08-28 (+211d) | 2028-02-09 → 2028-09-07 (+211d) |
| RHD4HOASZ2SUBIRR140 | Prepare and Submit As-Built Drawings for Irrigation Network for IRR-Z2-SUB | 2028-01-31 → 2028-08-29 (+211d) | 2028-02-08 → 2028-09-06 (+211d) |
| RHD4HOASZ2SUBMV150 | Prepare and Submit As-Built Drawings for Medium Voltage Network for MV-Z2-SUB | 2028-01-31 → 2028-08-29 (+211d) | 2028-02-08 → 2028-09-06 (+211d) |
| RHD4HOASZ2SUBPT130 | Prepare and Submit As-Built Drawings for Potable Water Network for PT-Z2-SUB | 2028-02-05 → 2028-09-03 (+211d) | 2028-02-13 → 2028-09-11 (+211d) |
| RHD4HOASZ2SUBSL170 | Prepare and Submit As-Built Drawings for Street Lighting Network for SL-Z2-SUB | 2028-02-02 → 2028-09-11 (+222d) | 2028-02-19 → 2028-09-28 (+222d) |
| RHD4HOASZ2SUBSW120 | Prepare and Submit As-Built Drawings for Sewage Network for SW-Z2-SUB | 2028-02-19 → 2028-09-17 (+211d) | 2028-02-26 → 2028-09-24 (+211d) |
| RHD4HOASZ2SUBCCTV210 | Prepare and Submit As-Built Drawings for Security Network for CCTV-Z2-SUB | 2028-01-29 → 2028-10-10 (+255d) | 2028-02-06 → 2028-10-18 (+255d) |
| RHD4HOASZ2SUBRD220 | Prepare and Submit As-Built Drawings for Road Works( KERBING AND PAVEMENT ) for RD-Z2-SUB | 2028-03-04 → 2028-11-12 (+253d) | 2028-03-09 → 2028-11-18 (+254d) |
| RHD4HOASZ2SUBICT200 | Prepare and Submit As-Built Drawings for Information and Communication Technologies Network for ICT-Z2-SUB | 2028-03-15 → 2028-11-23 (+253d) | 2028-03-30 → 2028-12-09 (+254d) |
| 9231 | **RHD4-02-002-As Built Drawing Submittals-Z3** | 2027-06-12 → 2028-01-03 (+205d) | 2028-03-14 → 2028-11-22 (+253d) |
| RHD4HOASZ3SUBLV160 | Prepare and Submit As-Built Drawings for Low Voltage Network for LV-Z3-SUB | 2027-06-12 → 2028-01-03 (+205d) | 2027-06-20 → 2028-01-11 (+205d) |
| RHD4HOASZ3SUBST110 | Prepare and Submit As-Built Drawings for Storm Water Network for ST-Z3-SUB | 2027-11-20 → 2028-06-18 (+211d) | 2027-12-02 → 2028-07-01 (+212d) |
| RHD4HOASZ3SUBEW100 | Prepare and Submit As-Built Drawings for Road Plans and Profile for EW-Z3-SUB | 2028-01-11 → 2028-08-09 (+211d) | 2028-01-29 → 2028-08-27 (+211d) |
| RHD4HOASZ3SUBSL170 | Prepare and Submit As-Built Drawings for Street Lighting Network for SL-Z3-SUB | 2028-01-16 → 2028-08-17 (+214d) | 2028-02-01 → 2028-09-03 (+215d) |
| RHD4HOASZ3SUBTC190 | Prepare and Submit As-Built Drawings for Telecommunications Network for TC-Z3-SUB | 2028-01-06 → 2028-08-17 (+224d) | 2028-01-12 → 2028-08-23 (+224d) |
| RHD4HOASZ3SUBIRR140 | Prepare and Submit As-Built Drawings for Irrigation Network for IRR-Z3-SUB | 2028-01-22 → 2028-08-20 (+211d) | 2028-01-30 → 2028-08-28 (+211d) |
| RHD4HOASZ3SUBMV150 | Prepare and Submit As-Built Drawings for Medium Voltage Network for MV-Z3-SUB | 2028-01-22 → 2028-08-20 (+211d) | 2028-01-30 → 2028-08-28 (+211d) |
| RHD4HOASZ3SUBPT130 | Prepare and Submit As-Built Drawings for Potable Water Network for PT-Z3-SUB | 2028-01-26 → 2028-08-24 (+211d) | 2028-02-03 → 2028-09-02 (+212d) |
| RHD4HOASZ3SUBSW120 | Prepare and Submit As-Built Drawings for Sewage Network for SW-Z3-SUB | 2028-02-12 → 2028-09-10 (+211d) | 2028-02-17 → 2028-09-16 (+212d) |
| RHD4HOASZ3SUBCCTV210 | Prepare and Submit As-Built Drawings for Security Network for CCTV-Z3-SUB | 2028-01-19 → 2028-10-01 (+256d) | 2028-01-27 → 2028-10-09 (+256d) |
| RHD4HOASZ3SUBICT200 | Prepare and Submit As-Built Drawings for Information and Communication Technologies Network for ICT-Z3-SUB | 2028-02-21 → 2028-11-05 (+258d) | 2028-03-14 → 2028-11-22 (+253d) |
| RHD4HOASZ3SUBRD220 | Prepare and Submit As-Built Drawings for Road Works( KERBING AND PAVEMENT ) for RD-Z3-SUB | 2028-02-21 → 2028-11-05 (+258d) | 2028-03-02 → 2028-11-11 (+254d) |
| 9232 | **RHD4-02-002-As Built Drawing Submittals-Z4** | 2027-05-30 → 2027-11-15 (+169d) | 2028-02-10 → 2028-09-09 (+212d) |
| RHD4HOASZ4SUBLV160 | Prepare and Submit As-Built Drawings for Low Voltage Network for LV-Z4-SUB | 2027-05-30 → 2027-11-15 (+169d) | 2027-06-07 → 2027-11-23 (+169d) |
| RHD4HOASZ4SUBSL170 | Prepare and Submit As-Built Drawings for Street Lighting Network for SL-Z4-SUB | 2027-06-24 → 2027-12-21 (+180d) | 2027-07-11 → 2028-01-06 (+179d) |
| RHD4HOASZ4SUBTC190 | Prepare and Submit As-Built Drawings for Telecommunications Network for TC-Z4-SUB | 2027-11-06 → 2028-06-04 (+211d) | 2027-11-23 → 2028-06-21 (+211d) |
| RHD4HOASZ4SUBEW100 | Prepare and Submit As-Built Drawings for Road Plans and Profile for EW-Z4-SUB | 2028-01-04 → 2028-08-02 (+211d) | 2028-01-10 → 2028-08-08 (+211d) |
| RHD4HOASZ4SUBCCTV210 | Prepare and Submit As-Built Drawings for Security Network for CCTV-Z4-SUB | 2028-01-10 → 2028-08-08 (+211d) | 2028-01-18 → 2028-08-16 (+211d) |
| RHD4HOASZ4SUBIRR140 | Prepare and Submit As-Built Drawings for Irrigation Network for IRR-Z4-SUB | 2028-01-12 → 2028-08-10 (+211d) | 2028-01-20 → 2028-08-19 (+212d) |
| RHD4HOASZ4SUBMV150 | Prepare and Submit As-Built Drawings for Medium Voltage Network for MV-Z4-SUB | 2028-01-12 → 2028-08-10 (+211d) | 2028-01-20 → 2028-08-19 (+212d) |
| RHD4HOASZ4SUBST110 | Prepare and Submit As-Built Drawings for Storm Water Network for ST-Z4-SUB | 2028-01-15 → 2028-08-13 (+211d) | 2028-01-27 → 2028-08-26 (+212d) |
| RHD4HOASZ4SUBICT200 | Prepare and Submit As-Built Drawings for Information and Communication Technologies Network for ICT-Z4-SUB | 2028-01-17 → 2028-08-15 (+211d) | 2028-02-03 → 2028-09-02 (+212d) |
| RHD4HOASZ4SUBPT130 | Prepare and Submit As-Built Drawings for Potable Water Network for PT-Z4-SUB | 2028-01-17 → 2028-08-15 (+211d) | 2028-01-25 → 2028-08-23 (+211d) |
| RHD4HOASZ4SUBRD220 | Prepare and Submit As-Built Drawings for Road Works( KERBING AND PAVEMENT ) for RD-Z4-SUB | 2028-01-26 → 2028-08-24 (+211d) | 2028-02-03 → 2028-09-02 (+212d) |
| RHD4HOASZ4SUBSW120 | Prepare and Submit As-Built Drawings for Sewage Network for SW-Z4-SUB | 2028-01-29 → 2028-08-27 (+211d) | 2028-02-10 → 2028-09-09 (+212d) |
| 9233 | **RHD4-02-002-As Built Drawing Submittals-Z5** | 2027-05-06 → 2027-10-26 (+173d) | 2028-01-17 → 2028-08-15 (+211d) |
| RHD4HOASZ5SUBLV160 | Prepare and Submit As-Built Drawings for Low Voltage Network for LV-Z5-SUB | 2027-05-06 → 2027-10-26 (+173d) | 2027-05-19 → 2027-11-03 (+168d) |
| RHD4HOASZ5SUBSL170 | Prepare and Submit As-Built Drawings for Street Lighting Network for SL-Z5-SUB | 2027-08-14 → 2028-01-29 (+168d) | 2027-08-30 → 2028-02-14 (+168d) |
| RHD4HOASZ5SUBTC190 | Prepare and Submit As-Built Drawings for Telecommunications Network for TC-Z5-SUB | 2027-10-02 → 2028-04-26 (+207d) | 2027-10-18 → 2028-05-16 (+211d) |
| RHD4HOASZ5SUBSW120 | Prepare and Submit As-Built Drawings for Sewage Network for SW-Z5-SUB | 2027-12-04 → 2028-07-02 (+211d) | 2027-12-16 → 2028-07-15 (+212d) |
| RHD4HOASZ5SUBICT200 | Prepare and Submit As-Built Drawings for Information and Communication Technologies Network for ICT-Z5-SUB | 2027-12-11 → 2028-07-09 (+211d) | 2027-12-28 → 2028-07-26 (+211d) |
| RHD4HOASZ5SUBEW100 | Prepare and Submit As-Built Drawings for Road Plans and Profile for EW-Z5-SUB | 2027-12-16 → 2028-07-15 (+212d) | 2027-12-25 → 2028-07-23 (+211d) |
| RHD4HOASZ5SUBST110 | Prepare and Submit As-Built Drawings for Storm Water Network for ST-Z5-SUB | 2027-12-18 → 2028-07-16 (+211d) | 2027-12-30 → 2028-07-29 (+212d) |
| RHD4HOASZ5SUBCCTV210 | Prepare and Submit As-Built Drawings for Security Network for CCTV-Z5-SUB | 2027-12-22 → 2028-07-20 (+211d) | 2027-12-30 → 2028-07-29 (+212d) |
| RHD4HOASZ5SUBIRR140 | Prepare and Submit As-Built Drawings for Irrigation Network for IRR-Z5-SUB | 2027-12-25 → 2028-07-23 (+211d) | 2028-01-02 → 2028-07-31 (+211d) |
| RHD4HOASZ5SUBMV150 | Prepare and Submit As-Built Drawings for Medium Voltage Network for MV-Z5-SUB | 2027-12-25 → 2028-07-23 (+211d) | 2028-01-02 → 2028-07-31 (+211d) |
| RHD4HOASZ5SUBPT130 | Prepare and Submit As-Built Drawings for Potable Water Network for PT-Z5-SUB | 2027-12-25 → 2028-07-23 (+211d) | 2028-01-02 → 2028-07-31 (+211d) |
| RHD4HOASZ5SUBRD220 | Prepare and Submit As-Built Drawings for Road Works( KERBING AND PAVEMENT ) for RD-Z5-SUB | 2028-01-11 → 2028-08-09 (+211d) | 2028-01-17 → 2028-08-15 (+211d) |
| 9234 | **RHD4-02-002-As Built Drawing Submittals-Z6** | 2027-05-20 → 2027-11-06 (+170d) | 2028-01-25 → 2028-08-23 (+211d) |
| RHD4HOASZ6SUBLV160 | Prepare and Submit As-Built Drawings for Low Voltage Network for LV-Z6-SUB | 2027-05-20 → 2027-11-06 (+170d) | 2027-05-29 → 2027-11-14 (+169d) |
| RHD4HOASZ6SUBSL170 | Prepare and Submit As-Built Drawings for Street Lighting Network for SL-Z6-SUB | 2027-05-22 → 2027-12-04 (+196d) | 2027-06-07 → 2027-12-20 (+196d) |
| RHD4HOASZ6SUBTC190 | Prepare and Submit As-Built Drawings for Telecommunications Network for TC-Z6-SUB | 2027-10-19 → 2028-05-17 (+211d) | 2027-11-04 → 2028-06-03 (+212d) |
| RHD4HOASZ6SUBSW120 | Prepare and Submit As-Built Drawings for Sewage Network for SW-Z6-SUB | 2027-12-18 → 2028-07-16 (+211d) | 2028-01-02 → 2028-07-31 (+211d) |
| RHD4HOASZ6SUBEW100 | Prepare and Submit As-Built Drawings for Road Plans and Profile for EW-Z6-SUB | 2027-12-26 → 2028-07-24 (+211d) | 2028-01-03 → 2028-08-01 (+211d) |
| RHD4HOASZ6SUBICT200 | Prepare and Submit As-Built Drawings for Information and Communication Technologies Network for ICT-Z6-SUB | 2027-12-29 → 2028-07-27 (+211d) | 2028-01-16 → 2028-08-14 (+211d) |
| RHD4HOASZ6SUBCCTV210 | Prepare and Submit As-Built Drawings for Security Network for CCTV-Z6-SUB | 2028-01-01 → 2028-07-30 (+211d) | 2028-01-09 → 2028-08-07 (+211d) |
| RHD4HOASZ6SUBST110 | Prepare and Submit As-Built Drawings for Storm Water Network for ST-Z6-SUB | 2028-01-01 → 2028-07-30 (+211d) | 2028-01-13 → 2028-08-12 (+212d) |
| RHD4HOASZ6SUBIRR140 | Prepare and Submit As-Built Drawings for Irrigation Network for IRR-Z6-SUB | 2028-01-03 → 2028-08-01 (+211d) | 2028-01-11 → 2028-08-09 (+211d) |
| RHD4HOASZ6SUBMV150 | Prepare and Submit As-Built Drawings for Medium Voltage Network for MV-Z6-SUB | 2028-01-03 → 2028-08-01 (+211d) | 2028-01-11 → 2028-08-09 (+211d) |

| ID | Task | Start | Finish |
| --- | --- | --- | --- |
| RHD4HOASZ6SUBPT130 | Prepare and Submit As-Built Drawings for Potable Water Network for PT-Z6-SUB | 2028-01-03 → 2028-08-01 (+211d) | 2028-01-16 → 2028-08-14 (+211d) |
| RHD4HOASZ6SUBRD220 | Prepare and Submit As-Built Drawings for Road Works( KERBING AND PAVEMENT ) for RD-Z6-SUB | 2028-01-18 → 2028-08-16 (+211d) | 2028-01-25 → 2028-08-23 (+211d) |
| 9235 | **RHD4-02-002-As Built Drawing Submittals-Z7** | 2027-07-14 → 2028-01-31 (+201d) | 2028-04-18 → 2028-12-27 (+253d) |
| RHD4HOASZ7SUBLV160 | Prepare and Submit As-Built Drawings for Low Voltage Network for LV-Z7-SUB | 2027-07-14 → 2028-01-31 (+201d) | 2027-07-22 → 2028-02-08 (+201d) |
| RHD4HOASZ7SUBST110 | Prepare and Submit As-Built Drawings for Storm Water Network for ST-Z7-SUB | 2028-01-03 → 2028-08-01 (+211d) | 2028-01-16 → 2028-08-14 (+211d) |
| RHD4HOASZ7SUBMV150 | Prepare and Submit As-Built Drawings for Medium Voltage Network for MV-Z7-SUB | 2028-02-19 → 2028-09-17 (+211d) | 2028-03-05 → 2028-09-28 (+207d) |
| RHD4HOASZ7SUBTC190 | Prepare and Submit As-Built Drawings for Telecommunications Network for TC-Z7-SUB | 2028-02-07 → 2028-09-18 (+224d) | 2028-02-24 → 2028-10-05 (+224d) |
| RHD4HOASZ7SUBEW100 | Prepare and Submit As-Built Drawings for Road Plans and Profile for EW-Z7-SUB | 2028-02-21 → 2028-09-19 (+211d) | 2028-03-05 → 2028-09-28 (+207d) |
| RHD4HOASZ7SUBIRR140 | Prepare and Submit As-Built Drawings for Irrigation Network for IRR-Z7-SUB | 2028-02-21 → 2028-09-19 (+211d) | 2028-03-14 → 2028-10-08 (+208d) |
| RHD4HOASZ7SUBPT130 | Prepare and Submit As-Built Drawings for Potable Water Network for PT-Z7-SUB | 2028-02-24 → 2028-09-21 (+210d) | 2028-03-14 → 2028-10-08 (+208d) |
| RHD4HOASZ7SUBSW120 | Prepare and Submit As-Built Drawings for Sewage Network for SW-Z7-SUB | 2028-03-11 → 2028-10-04 (+207d) | 2028-03-23 → 2028-10-17 (+208d) |
| RHD4HOASZ7SUBSL170 | Prepare and Submit As-Built Drawings for Street Lighting Network for SL-Z7-SUB | 2028-03-13 → 2028-10-17 (+218d) | 2028-03-29 → 2028-11-02 (+218d) |
| RHD4HOASZ7SUBCCTV210 | Prepare and Submit As-Built Drawings for Security Network for CCTV-Z7-SUB | 2028-02-16 → 2028-10-29 (+256d) | 2028-03-06 → 2028-11-12 (+251d) |
| RHD4HOASZ7SUBRD220 | Prepare and Submit As-Built Drawings for Road Works( KERBING AND PAVEMENT ) for RD-Z7-SUB | 2028-03-18 → 2028-11-26 (+253d) | 2028-03-23 → 2028-12-02 (+254d) |
| RHD4HOASZ7SUBICT200 | Prepare and Submit As-Built Drawings for Information and Communication Technologies Network for ICT-Z7-SUB | 2028-04-10 → 2028-12-19 (+253d) | 2028-04-18 → 2028-12-27 (+253d) |
| 9236 | **RHD4-02-002-As Built Drawing Submittals-Z8** | 2027-07-24 → 2028-02-09 (+200d) | 2028-04-27 → 2029-01-06 (+254d) |
| RHD4HOASZ8SUBLV160 | Prepare and Submit As-Built Drawings for Low Voltage Network for LV-Z8-SUB | 2027-07-24 → 2028-02-09 (+200d) | 2027-08-01 → 2028-02-17 (+200d) |
| RHD4HOASZ8SUBST110 | Prepare and Submit As-Built Drawings for Storm Water Network for ST-Z8-SUB | 2028-01-17 → 2028-08-15 (+211d) | 2028-01-30 → 2028-08-28 (+211d) |
| RHD4HOASZ8SUBMV150 | Prepare and Submit As-Built Drawings for Medium Voltage Network for MV-Z8-SUB | 2028-03-06 → 2028-09-30 (+208d) | 2028-03-14 → 2028-10-08 (+208d) |
| RHD4HOASZ8SUBTC190 | Prepare and Submit As-Built Drawings for Telecommunications Network for TC-Z8-SUB | 2028-02-26 → 2028-10-07 (+224d) | 2028-03-16 → 2028-10-23 (+221d) |
| RHD4HOASZ8SUBIRR140 | Prepare and Submit As-Built Drawings for Irrigation Network for IRR-Z8-SUB | 2028-03-15 → 2028-10-09 (+208d) | 2028-04-02 → 2028-10-26 (+207d) |
| RHD4HOASZ8SUBPT130 | Prepare and Submit As-Built Drawings for Potable Water Network for PT-Z8-SUB | 2028-03-15 → 2028-10-09 (+208d) | 2028-04-02 → 2028-10-26 (+207d) |
| RHD4HOASZ8SUBSW120 | Prepare and Submit As-Built Drawings for Sewage Network for SW-Z8-SUB | 2028-03-25 → 2028-10-18 (+207d) | 2028-04-06 → 2028-10-31 (+208d) |
| RHD4HOASZ8SUBSL170 | Prepare and Submit As-Built Drawings for Street Lighting Network for SL-Z8-SUB | 2028-03-30 → 2028-11-04 (+219d) | 2028-04-16 → 2028-11-20 (+218d) |
| RHD4HOASZ8SUBCCTV210 | Prepare and Submit As-Built Drawings for Security Network for CCTV-Z8-SUB | 2028-03-07 → 2028-11-13 (+251d) | 2028-03-25 → 2028-11-30 (+250d) |
| RHD4HOASZ8SUBEW100 | Prepare and Submit As-Built Drawings for Road Plans and Profile for EW-Z8-SUB | 2028-04-03 → 2028-12-03 (+244d) | 2028-04-11 → 2028-12-11 (+244d) |
| RHD4HOASZ8SUBRD220 | Prepare and Submit As-Built Drawings for Road Works( KERBING AND PAVEMENT ) for RD-Z8-SUB | 2028-04-03 → 2028-12-03 (+244d) | 2028-04-09 → 2028-12-09 (+244d) |
| RHD4HOASZ8SUBICT200 | Prepare and Submit As-Built Drawings for Information and Communication Technologies Network for ICT-Z8-SUB | 2028-04-19 → 2028-12-28 (+253d) | 2028-04-27 → 2029-01-06 (+254d) |
| 9237 | **RHD4-02-002-As Built Drawing Submittals-Z9** | 2027-08-12 → 2028-02-19 (+191d) | 2028-05-10 → 2029-01-15 (+250d) |
| RHD4HOASZ9SUBLV160 | Prepare and Submit As-Built Drawings for Low Voltage Network for LV-Z9-SUB | 2027-08-12 → 2028-02-19 (+191d) | 2027-08-21 → 2028-03-02 (+194d) |
| RHD4HOASZ9SUBST110 | Prepare and Submit As-Built Drawings for Storm Water Network for ST-Z9-SUB | 2028-01-31 → 2028-08-29 (+211d) | 2028-02-13 → 2028-09-11 (+211d) |
| RHD4HOASZ9SUBRD220 | Prepare and Submit As-Built Drawings for Road Works( KERBING AND PAVEMENT ) for RD-Z9-SUB | 2028-01-20 → 2028-09-04 (+228d) | 2028-01-26 → 2028-09-10 (+228d) |
| RHD4HOASZ9SUBMV150 | Prepare and Submit As-Built Drawings for Medium Voltage Network for MV-Z9-SUB | 2028-03-15 → 2028-10-09 (+208d) | 2028-03-23 → 2028-10-17 (+208d) |
| RHD4HOASZ9SUBTC190 | Prepare and Submit As-Built Drawings for Telecommunications Network for TC-Z9-SUB | 2028-03-18 → 2028-10-24 (+220d) | 2028-03-28 → 2028-11-04 (+221d) |
| RHD4HOASZ9SUBIRR140 | Prepare and Submit As-Built Drawings for Irrigation Network for IRR-Z9-SUB | 2028-04-03 → 2028-10-28 (+208d) | 2028-04-20 → 2028-11-14 (+208d) |
| RHD4HOASZ9SUBPT130 | Prepare and Submit As-Built Drawings for Potable Water Network for PT-Z9-SUB | 2028-04-03 → 2028-10-28 (+208d) | 2028-04-20 → 2028-11-14 (+208d) |
| RHD4HOASZ9SUBSW120 | Prepare and Submit As-Built Drawings for Sewage Network for SW-Z9-SUB | 2028-04-08 → 2028-11-01 (+207d) | 2028-04-20 → 2028-11-14 (+208d) |
| RHD4HOASZ9SUBSL170 | Prepare and Submit As-Built Drawings for Street Lighting Network for SL-Z9-SUB | 2028-04-17 → 2028-11-21 (+218d) | 2028-05-03 → 2028-12-07 (+218d) |
| RHD4HOASZ9SUBCCTV210 | Prepare and Submit As-Built Drawings for Security Network for CCTV-Z9-SUB | 2028-03-26 → 2028-12-02 (+251d) | 2028-04-12 → 2028-12-19 (+251d) |
| RHD4HOASZ9SUBEW100 | Prepare and Submit As-Built Drawings for Road Plans and Profile for EW-Z9-SUB | 2028-04-12 → 2028-12-12 (+244d) | 2028-04-20 → 2028-12-20 (+244d) |
| RHD4HOASZ9SUBICT200 | Prepare and Submit As-Built Drawings for Information and Communication Technologies Network for ICT-Z9-SUB | 2028-04-29 → 2029-01-07 (+253d) | 2028-05-10 → 2029-01-15 (+250d) |
| 9238 | **RHD4-02-002-As Built Drawing Submittals-Tunne 1 - TUN1** | 2027-10-04 → 2028-05-02 (+211d) | 2027-10-17 → 2028-05-18 (+214d) |
| RHD4HOASTUN1SUB1000 | Prepare and Submit As-Built Drawings for TUNNEL 1 (PLANS) -Z5 for -TUN1-SUB | 2027-10-04 → 2028-05-02 (+211d) | 2027-10-17 → 2028-05-18 (+214d) |
| RHD4HOASTUN1SUB1100 | Prepare and Submit As-Built Drawings for TUNNEL 1 (SECTIONS) -Z5 for -TUN1-SUB | 2027-10-04 → 2028-05-02 (+211d) | 2027-10-17 → 2028-05-18 (+214d) |
| RHD4HOASTUN1SUB1200 | Prepare and Submit As-Built Drawings for TUNNEL 1 (BBS) -Z5 for -TUN1-SUB | 2027-10-04 → 2028-05-02 (+211d) | 2027-10-17 → 2028-05-18 (+214d) |
| 9240 | **RHD4-02-002-As Built Drawing Submittals-Sewage Lift Station 1 - SWL1** | 2027-09-19 → 2028-04-18 (+212d) | 2027-11-14 → 2028-06-15 (+214d) |
| RHD4HOASSWL1SUB1000 | Prepare and Submit As-Built Drawings for Sewage Lift Station 1 - Z3 - Structure Package for -SWL1-SUB | 2027-09-19 → 2028-04-18 (+212d) | 2027-10-03 → 2028-05-01 (+211d) |
| RHD4HOASSWL1SUB1100 | Prepare and Submit As-Built Drawings for Sewage Lift Station 1 - Z3 - Architecture Package for -SWL1-SUB | 2027-10-04 → 2028-05-02 (+211d) | 2027-10-17 → 2028-05-18 (+214d) |
| RHD4HOASSWL1SUB1200 | Prepare and Submit As-Built Drawings for Sewage Lift Station 1 - Z3 - Mechanical Package for -SWL1-SUB | 2027-10-18 → 2028-05-20 (+215d) | 2027-10-31 → 2028-06-01 (+214d) |
| RHD4HOASSWL1SUB1300 | Prepare and Submit As-Built Drawings for Sewage Lift Station 1 - Z3 - Electrical Package for -SWL1-SUB | 2027-11-01 → 2028-06-03 (+215d) | 2027-11-14 → 2028-06-15 (+214d) |
| 9242 | **RHD4-02-002-As Built Drawing Submittals-Storm Lift Station 1 - STL1** | 2028-01-04 → 2028-08-17 (+226d) | 2028-01-23 → 2028-10-07 (+258d) |
| RHD4HOASSTL1SUB1000 | Prepare and Submit As-Built Drawings for Storm Lift Station 1 - Z5 - Structure Package for -STL1-SUB | 2028-01-04 → 2028-08-17 (+226d) | 2028-01-10 → 2028-08-23 (+226d) |
| RHD4HOASSTL1SUB1200 | Prepare and Submit As-Built Drawings for Storm Lift Station 1 - Z5 - Mechanical Package for -STL1-SUB | 2028-01-04 → 2028-08-17 (+226d) | 2028-01-22 → 2028-09-04 (+226d) |
| RHD4HOASSTL1SUB1300 | Prepare and Submit As-Built Drawings for Storm Lift Station 1 - Z5 - Electrical Package for -STL1-SUB | 2028-01-04 → 2028-08-17 (+226d) | 2028-01-19 → 2028-09-02 (+227d) |
| RHD4HOASSTL1SUB1100 | Prepare and Submit As-Built Drawings for Storm Lift Station 1 - Z5 - Architecture Package for -STL1-SUB | 2028-01-17 → 2028-10-01 (+258d) | 2028-01-23 → 2028-10-07 (+258d) |
| 9244 | **RHD4-02-002-As Built Drawing Approvals** | 2027-05-20 → 2027-11-04 (+168d) | 2028-05-30 → 2029-01-24 (+239d) |
| 9245 | **RHD4-02-002-As Built Drawing Approvals-Z1** | 2027-07-10 → 2028-01-31 (+205d) | 2028-04-18 → 2028-12-27 (+253d) |
| RHD4HOASZ1APPLV160 | Review and Approval of As-Built Drawings for Low Voltage Network for LV-Z1-APP | 2027-07-10 → 2028-01-31 (+205d) | 2027-07-18 → 2028-02-08 (+205d) |
| RHD4HOASZ1APPMV150 | Review and Approval of As-Built Drawings for Medium Voltage Network for MV-Z1-APP | 2028-02-19 → 2028-09-17 (+211d) | 2028-03-05 → 2028-09-28 (+207d) |
| RHD4HOASZ1APPTC190 | Review and Approval of As-Built Drawings for Telecommunications Network for TC-Z1-APP | 2028-02-07 → 2028-09-18 (+224d) | 2028-02-24 → 2028-10-05 (+224d) |
| RHD4HOASZ1APPEW100 | Review and Approval of As-Built Drawings for Road Plans and Profile for EW-Z1-APP | 2028-02-21 → 2028-09-19 (+211d) | 2028-03-05 → 2028-09-28 (+207d) |
| RHD4HOASZ1APPST110 | Review and Approval of As-Built Drawings for Storm Water Network for ST-Z1-APP | 2028-03-15 → 2028-10-09 (+208d) | 2028-03-28 → 2028-10-22 (+208d) |
| RHD4HOASZ1APPIRR140 | Review and Approval of As-Built Drawings for Irrigation Network for IRR-Z1-APP | 2028-03-18 → 2028-10-11 (+207d) | 2028-03-30 → 2028-10-24 (+208d) |
| RHD4HOASZ1APPPT130 | Review and Approval of As-Built Drawings for Potable Water Network for PT-Z1-APP | 2028-03-18 → 2028-10-11 (+207d) | 2028-03-30 → 2028-10-24 (+208d) |
| RHD4HOASZ1APPSL170 | Review and Approval of As-Built Drawings for Street Lighting Network for SL-Z1-APP | 2028-03-13 → 2028-10-17 (+218d) | 2028-03-29 → 2028-11-02 (+218d) |
| RHD4HOASZ1APPSW120 | Review and Approval of As-Built Drawings for Sewage Network for SW-Z1-APP | 2028-03-27 → 2028-10-21 (+208d) | 2028-04-02 → 2028-10-26 (+207d) |
| RHD4HOASZ1APPCCTV210 | Review and Approval of As-Built Drawings for Security Network for CCTV-Z1-APP | 2028-02-16 → 2028-10-29 (+256d) | 2028-03-06 → 2028-11-12 (+251d) |
| RHD4HOASZ1APPRD220 | Review and Approval of As-Built Drawings for Road Works( KERBING AND PAVEMENT ) for RD-Z1-APP | 2028-03-22 → 2028-11-30 (+253d) | 2028-03-28 → 2028-12-06 (+253d) |
| RHD4HOASZ1APPICT200 | Review and Approval of As-Built Drawings for Information and Communication Technologies Network for ICT-Z1-APP | 2028-04-10 → 2028-12-19 (+253d) | 2028-04-18 → 2028-12-27 (+253d) |
| 9246 | **RHD4-02-002-As Built Drawing Approvals-Z2** | 2027-06-30 → 2028-01-22 (+206d) | 2028-04-09 → 2028-12-18 (+253d) |

| ID | Task | Start | Finish |
| --- | --- | --- | --- |
| RHD4HOASZ2APPLV160 | Review and Approval of As-Built Drawings for Low Voltage Network for LV-Z2-APP | 2027-06-30 → 2028-01-22 (+206d) | 2027-07-08 → 2028-01-30 (+206d) |
| RHD4HOASZ2APPTC190 | Review and Approval of As-Built Drawings for Telecommunications Network for TC-Z2-APP | 2028-01-20 → 2028-08-31 (+224d) | 2028-01-26 → 2028-09-06 (+224d) |
| RHD4HOASZ2APPMV150 | Review and Approval of As-Built Drawings for Medium Voltage Network for MV-Z2-APP | 2028-02-09 → 2028-09-07 (+211d) | 2028-02-17 → 2028-09-16 (+212d) |
| RHD4HOASZ2APPEW100 | Review and Approval of As-Built Drawings for Road Plans and Profile for EW-Z2-APP | 2028-02-10 → 2028-09-09 (+212d) | 2028-02-20 → 2028-09-18 (+211d) |
| RHD4HOASZ2APPST110 | Review and Approval of As-Built Drawings for Storm Water Network for ST-Z2-APP | 2028-03-01 → 2028-09-25 (+208d) | 2028-03-14 → 2028-10-08 (+208d) |
| RHD4HOASZ2APPIRR140 | Review and Approval of As-Built Drawings for Irrigation Network for IRR-Z2-APP | 2028-03-04 → 2028-09-27 (+207d) | 2028-03-16 → 2028-10-10 (+208d) |
| RHD4HOASZ2APPPT130 | Review and Approval of As-Built Drawings for Potable Water Network for PT-Z2-APP | 2028-03-04 → 2028-09-27 (+207d) | 2028-03-16 → 2028-10-10 (+208d) |
| RHD4HOASZ2APPSL170 | Review and Approval of As-Built Drawings for Street Lighting Network for SL-Z2-APP | 2028-02-20 → 2028-09-30 (+223d) | 2028-03-12 → 2028-10-16 (+218d) |
| RHD4HOASZ2APPSW120 | Review and Approval of As-Built Drawings for Sewage Network for SW-Z2-APP | 2028-03-08 → 2028-10-02 (+208d) | 2028-03-26 → 2028-10-19 (+207d) |
| RHD4HOASZ2APPCCTV210 | Review and Approval of As-Built Drawings for Security Network for CCTV-Z2-APP | 2028-02-07 → 2028-10-19 (+255d) | 2028-02-15 → 2028-10-28 (+256d) |
| RHD4HOASZ2APPRD220 | Review and Approval of As-Built Drawings for Road Works( KERBING AND PAVEMENT ) for RD-Z2-APP | 2028-03-13 → 2028-11-21 (+253d) | 2028-03-21 → 2028-11-29 (+253d) |
| RHD4HOASZ2APPICT200 | Review and Approval of As-Built Drawings for Information and Communication Technologies Network for ICT-Z2-APP | 2028-04-01 → 2028-12-10 (+253d) | 2028-04-09 → 2028-12-18 (+253d) |
| 9247 | **RHD4-02-002-As Built Drawing Approvals-Z3** | 2027-06-21 → 2028-01-12 (+205d) | 2028-03-30 → 2028-12-09 (+254d) |
| RHD4HOASZ3APPLV160 | Review and Approval of As-Built Drawings for Low Voltage Network for LV-Z3-APP | 2027-06-21 → 2028-01-12 (+205d) | 2027-06-29 → 2028-01-20 (+205d) |
| RHD4HOASZ3APPTC190 | Review and Approval of As-Built Drawings for Telecommunications Network for TC-Z3-APP | 2028-01-13 → 2028-08-24 (+224d) | 2028-01-19 → 2028-08-30 (+224d) |
| RHD4HOASZ3APPEW100 | Review and Approval of As-Built Drawings for Road Plans and Profile for EW-Z3-APP | 2028-01-30 → 2028-08-28 (+211d) | 2028-02-09 → 2028-09-07 (+211d) |
| RHD4HOASZ3APPMV150 | Review and Approval of As-Built Drawings for Medium Voltage Network for MV-Z3-APP | 2028-01-31 → 2028-08-29 (+211d) | 2028-02-08 → 2028-09-06 (+211d) |
| RHD4HOASZ3APPSL170 | Review and Approval of As-Built Drawings for Street Lighting Network for SL-Z3-APP | 2028-02-02 → 2028-09-04 (+215d) | 2028-02-19 → 2028-09-20 (+214d) |
| RHD4HOASZ3APPST110 | Review and Approval of As-Built Drawings for Storm Water Network for ST-Z3-APP | 2028-02-12 → 2028-09-10 (+211d) | 2028-02-26 → 2028-09-24 (+211d) |
| RHD4HOASZ3APPIRR140 | Review and Approval of As-Built Drawings for Irrigation Network for IRR-Z3-APP | 2028-02-14 → 2028-09-12 (+211d) | 2028-03-02 → 2028-09-26 (+208d) |
| RHD4HOASZ3APPPT130 | Review and Approval of As-Built Drawings for Potable Water Network for PT-Z3-APP | 2028-02-14 → 2028-09-12 (+211d) | 2028-03-02 → 2028-09-26 (+208d) |
| RHD4HOASZ3APPSW120 | Review and Approval of As-Built Drawings for Sewage Network for SW-Z3-APP | 2028-03-01 → 2028-09-25 (+208d) | 2028-03-07 → 2028-10-01 (+208d) |
| RHD4HOASZ3APPCCTV210 | Review and Approval of As-Built Drawings for Security Network for CCTV-Z3-APP | 2028-01-29 → 2028-10-10 (+255d) | 2028-02-06 → 2028-10-18 (+255d) |
| RHD4HOASZ3APPRD220 | Review and Approval of As-Built Drawings for Road Works( KERBING AND PAVEMENT ) for RD-Z3-APP | 2028-03-04 → 2028-11-12 (+253d) | 2028-03-12 → 2028-11-20 (+253d) |
| RHD4HOASZ3APPICT200 | Review and Approval of As-Built Drawings for Information and Communication Technologies Network for ICT-Z3-APP | 2028-03-15 → 2028-11-23 (+253d) | 2028-03-30 → 2028-12-09 (+254d) |
| 9248 | **RHD4-02-002-As Built Drawing Approvals-Z4** | 2027-06-08 → 2027-11-24 (+169d) | 2028-02-26 → 2028-09-24 (+211d) |
| RHD4HOASZ4APPLV160 | Review and Approval of As-Built Drawings for Low Voltage Network for LV-Z4-APP | 2027-06-08 → 2027-11-24 (+169d) | 2027-06-16 → 2027-12-02 (+169d) |
| RHD4HOASZ4APPSL170 | Review and Approval of As-Built Drawings for Street Lighting Network for SL-Z4-APP | 2027-07-12 → 2028-01-08 (+180d) | 2027-07-28 → 2028-01-24 (+180d) |
| RHD4HOASZ4APPTC190 | Review and Approval of As-Built Drawings for Telecommunications Network for TC-Z4-APP | 2027-11-24 → 2028-06-22 (+211d) | 2027-12-12 → 2028-07-10 (+211d) |
| RHD4HOASZ4APPEW100 | Review and Approval of As-Built Drawings for Road Plans and Profile for EW-Z4-APP | 2028-01-18 → 2028-08-16 (+211d) | 2028-01-29 → 2028-08-27 (+211d) |
| RHD4HOASZ4APPCCTV210 | Review and Approval of As-Built Drawings for Security Network for CCTV-Z4-APP | 2028-01-19 → 2028-08-17 (+211d) | 2028-01-27 → 2028-08-26 (+212d) |
| RHD4HOASZ4APPMV150 | Review and Approval of As-Built Drawings for Medium Voltage Network for MV-Z4-APP | 2028-01-22 → 2028-08-20 (+211d) | 2028-01-30 → 2028-08-28 (+211d) |
| RHD4HOASZ4APPST110 | Review and Approval of As-Built Drawings for Storm Water Network for ST-Z4-APP | 2028-01-29 → 2028-08-27 (+211d) | 2028-02-10 → 2028-09-09 (+212d) |
| RHD4HOASZ4APPIRR140 | Review and Approval of As-Built Drawings for Irrigation Network for IRR-Z4-APP | 2028-01-31 → 2028-08-29 (+211d) | 2028-02-13 → 2028-09-11 (+211d) |
| RHD4HOASZ4APPPT130 | Review and Approval of As-Built Drawings for Potable Water Network for PT-Z4-APP | 2028-01-31 → 2028-08-29 (+211d) | 2028-02-13 → 2028-09-11 (+211d) |
| RHD4HOASZ4APPICT200 | Review and Approval of As-Built Drawings for Information and Communication Technologies Network for ICT-Z4-APP | 2028-02-05 → 2028-09-03 (+211d) | 2028-02-23 → 2028-09-20 (+210d) |
| RHD4HOASZ4APPRD220 | Review and Approval of As-Built Drawings for Road Works( KERBING AND PAVEMENT ) for RD-Z4-APP | 2028-02-05 → 2028-09-03 (+211d) | 2028-02-13 → 2028-09-11 (+211d) |
| RHD4HOASZ4APPSW120 | Review and Approval of As-Built Drawings for Sewage Network for SW-Z4-APP | 2028-02-12 → 2028-09-10 (+211d) | 2028-02-26 → 2028-09-24 (+211d) |
| 9249 | **RHD4-02-002-As Built Drawing Approvals-Z5** | 2027-05-20 → 2027-11-04 (+168d) | 2028-01-25 → 2028-08-23 (+211d) |
| RHD4HOASZ5APPLV160 | Review and Approval of As-Built Drawings for Low Voltage Network for LV-Z5-APP | 2027-05-20 → 2027-11-04 (+168d) | 2027-05-29 → 2027-11-13 (+168d) |
| RHD4HOASZ5APPSL170 | Review and Approval of As-Built Drawings for Street Lighting Network for SL-Z5-APP | 2027-08-31 → 2028-02-15 (+168d) | 2027-09-16 → 2028-03-07 (+173d) |
| RHD4HOASZ5APPTC190 | Review and Approval of As-Built Drawings for Telecommunications Network for TC-Z5-APP | 2027-10-19 → 2028-05-17 (+211d) | 2027-11-04 → 2028-06-03 (+212d) |
| RHD4HOASZ5APPSW120 | Review and Approval of As-Built Drawings for Sewage Network for SW-Z5-APP | 2027-12-18 → 2028-07-16 (+211d) | 2027-12-30 → 2028-07-29 (+212d) |
| RHD4HOASZ5APPEW100 | Review and Approval of As-Built Drawings for Road Plans and Profile for EW-Z5-APP | 2027-12-26 → 2028-07-24 (+211d) | 2028-01-05 → 2028-08-03 (+211d) |
| RHD4HOASZ5APPICT200 | Review and Approval of As-Built Drawings for Information and Communication Technologies Network for ICT-Z5-APP | 2027-12-29 → 2028-07-27 (+211d) | 2028-01-16 → 2028-08-14 (+211d) |
| RHD4HOASZ5APPCCTV210 | Review and Approval of As-Built Drawings for Security Network for CCTV-Z5-APP | 2028-01-01 → 2028-07-30 (+211d) | 2028-01-09 → 2028-08-07 (+211d) |
| RHD4HOASZ5APPST110 | Review and Approval of As-Built Drawings for Storm Water Network for ST-Z5-APP | 2028-01-01 → 2028-07-30 (+211d) | 2028-01-13 → 2028-08-12 (+212d) |
| RHD4HOASZ5APPIRR140 | Review and Approval of As-Built Drawings for Irrigation Network for IRR-Z5-APP | 2028-01-03 → 2028-08-01 (+211d) | 2028-01-16 → 2028-08-14 (+211d) |
| RHD4HOASZ5APPMV150 | Review and Approval of As-Built Drawings for Medium Voltage Network for MV-Z5-APP | 2028-01-03 → 2028-08-01 (+211d) | 2028-01-11 → 2028-08-09 (+211d) |
| RHD4HOASZ5APPPT130 | Review and Approval of As-Built Drawings for Potable Water Network for PT-Z5-APP | 2028-01-03 → 2028-08-01 (+211d) | 2028-01-16 → 2028-08-14 (+211d) |
| RHD4HOASZ5APPRD220 | Review and Approval of As-Built Drawings for Road Works( KERBING AND PAVEMENT ) for RD-Z5-APP | 2028-01-18 → 2028-08-16 (+211d) | 2028-01-25 → 2028-08-23 (+211d) |
| 9250 | **RHD4-02-002-As Built Drawing Approvals-Z6** | 2027-05-30 → 2027-11-15 (+169d) | 2028-02-03 → 2028-09-02 (+212d) |
| RHD4HOASZ6APPLV160 | Review and Approval of As-Built Drawings for Low Voltage Network for LV-Z6-APP | 2027-05-30 → 2027-11-15 (+169d) | 2027-06-07 → 2027-11-23 (+169d) |
| RHD4HOASZ6APPSL170 | Review and Approval of As-Built Drawings for Street Lighting Network for SL-Z6-APP | 2027-06-08 → 2027-12-21 (+196d) | 2027-06-24 → 2028-01-06 (+196d) |
| RHD4HOASZ6APPTC190 | Review and Approval of As-Built Drawings for Telecommunications Network for TC-Z6-APP | 2027-11-06 → 2028-06-04 (+211d) | 2027-11-23 → 2028-06-21 (+211d) |
| RHD4HOASZ6APPSW120 | Review and Approval of As-Built Drawings for Sewage Network for SW-Z6-APP | 2028-01-03 → 2028-08-01 (+211d) | 2028-01-16 → 2028-08-14 (+211d) |
| RHD4HOASZ6APPEW100 | Review and Approval of As-Built Drawings for Road Plans and Profile for EW-Z6-APP | 2028-01-06 → 2028-08-05 (+212d) | 2028-01-17 → 2028-08-15 (+211d) |
| RHD4HOASZ6APPCCTV210 | Review and Approval of As-Built Drawings for Security Network for CCTV-Z6-APP | 2028-01-10 → 2028-08-08 (+211d) | 2028-01-18 → 2028-08-16 (+211d) |
| RHD4HOASZ6APPMV150 | Review and Approval of As-Built Drawings for Medium Voltage Network for MV-Z6-APP | 2028-01-12 → 2028-08-10 (+211d) | 2028-01-20 → 2028-08-19 (+212d) |
| RHD4HOASZ6APPST110 | Review and Approval of As-Built Drawings for Storm Water Network for ST-Z6-APP | 2028-01-15 → 2028-08-13 (+211d) | 2028-01-27 → 2028-08-26 (+212d) |
| RHD4HOASZ6APPICT200 | Review and Approval of As-Built Drawings for Information and Communication Technologies Network for ICT-Z6-APP | 2028-01-17 → 2028-08-15 (+211d) | 2028-02-03 → 2028-09-02 (+212d) |
| RHD4HOASZ6APPIRR140 | Review and Approval of As-Built Drawings for Irrigation Network for IRR-Z6-APP | 2028-01-17 → 2028-08-15 (+211d) | 2028-01-30 → 2028-08-28 (+211d) |
| RHD4HOASZ6APPPT130 | Review and Approval of As-Built Drawings for Potable Water Network for PT-Z6-APP | 2028-01-17 → 2028-08-15 (+211d) | 2028-01-30 → 2028-08-28 (+211d) |
| RHD4HOASZ6APPRD220 | Review and Approval of As-Built Drawings for Road Works( KERBING AND PAVEMENT ) for RD-Z6-APP | 2028-01-26 → 2028-08-24 (+211d) | 2028-02-03 → 2028-09-02 (+212d) |
| 9251 | **RHD4-02-002-As Built Drawing Approvals-Z7** | 2027-07-24 → 2028-02-09 (+200d) | 2028-04-27 → 2029-01-06 (+254d) |
| RHD4HOASZ7APPLV160 | Review and Approval of As-Built Drawings for Low Voltage Network for LV-Z7-APP | 2027-07-24 → 2028-02-09 (+200d) | 2027-08-01 → 2028-02-17 (+200d) |
| RHD4HOASZ7APPEW100 | Review and Approval of As-Built Drawings for Road Plans and Profile for EW-Z7-APP | 2028-03-06 → 2028-09-30 (+208d) | 2028-03-16 → 2028-10-10 (+208d) |
| RHD4HOASZ7APPMV150 | Review and Approval of As-Built Drawings for Medium Voltage Network for MV-Z7-APP | 2028-03-06 → 2028-09-30 (+208d) | 2028-03-23 → 2028-10-17 (+208d) |
| RHD4HOASZ7APPTC190 | Review and Approval of As-Built Drawings for Telecommunications Network for TC-Z7-APP | 2028-02-26 → 2028-10-07 (+224d) | 2028-03-16 → 2028-10-23 (+221d) |
| RHD4HOASZ7APPST110 | Review and Approval of As-Built Drawings for Storm Water Network for ST-Z7-APP | 2028-03-29 → 2028-10-23 (+208d) | 2028-04-11 → 2028-11-05 (+208d) |

| ID | Task | Start | Finish | Duration |
| --- | --- | --- | --- | --- |
| RHD4HOASZ7APPIRR140 | Review and Approval of As-Built Drawings for Irrigation Network for IRR-Z7-APP | 2028-04-01 → 2028-10-25 (+207d) | 2028-04-11 → 2028-11-05 (+208d) |  |
| RHD4HOASZ7APPPT130 | Review and Approval of As-Built Drawings for Potable Water Network for PT-Z7-APP | 2028-04-01 → 2028-10-25 (+207d) | 2028-04-11 → 2028-11-05 (+208d) |  |
| RHD4HOASZ7APPSW120 | Review and Approval of As-Built Drawings for Sewage Network for SW-Z7-APP | 2028-04-03 → 2028-10-28 (+208d) | 2028-04-11 → 2028-11-05 (+208d) |  |
| RHD4HOASZ7APPSL170 | Review and Approval of As-Built Drawings for Street Lighting Network for SL-Z7-APP | 2028-03-30 → 2028-11-04 (+219d) | 2028-04-16 → 2028-11-20 (+218d) |  |
| RHD4HOASZ7APPCCTV210 | Review and Approval of As-Built Drawings for Security Network for CCTV-Z7-APP | 2028-03-07 → 2028-11-13 (+251d) | 2028-03-25 → 2028-11-30 (+250d) |  |
| RHD4HOASZ7APPRD220 | Review and Approval of As-Built Drawings for Road Works( KERBING AND PAVEMENT ) for RD-Z7-APP | 2028-03-29 → 2028-12-07 (+253d) | 2028-04-04 → 2028-12-13 (+253d) |  |
| RHD4HOASZ7APPICT200 | Review and Approval of As-Built Drawings for Information and Communication Technologies Network for ICT-Z7-APP | 2028-04-19 → 2028-12-28 (+253d) | 2028-04-27 → 2029-01-06 (+254d) |  |
| 9252 | **RHD4-02-002-As Built Drawing Approvals-Z8** | 2027-08-02 → 2028-02-19 (+201d) | 2028-05-10 → 2029-01-15 (+250d) |  |
| RHD4HOASZ8APPLV160 | Review and Approval of As-Built Drawings for Low Voltage Network for LV-Z8-APP | 2027-08-02 → 2028-02-19 (+201d) | 2027-08-10 → 2028-03-02 (+205d) |  |
| RHD4HOASZ8APPMV150 | Review and Approval of As-Built Drawings for Medium Voltage Network for MV-Z8-APP | 2028-03-25 → 2028-10-18 (+207d) | 2028-04-11 → 2028-11-05 (+208d) |  |
| RHD4HOASZ8APPTC190 | Review and Approval of As-Built Drawings for Telecommunications Network for TC-Z8-APP | 2028-03-18 → 2028-10-24 (+220d) | 2028-04-03 → 2028-11-09 (+220d) |  |
| RHD4HOASZ8APPIRR140 | Review and Approval of As-Built Drawings for Irrigation Network for IRR-Z8-APP | 2028-04-12 → 2028-11-06 (+208d) | 2028-04-20 → 2028-11-14 (+208d) |  |
| RHD4HOASZ8APPPT130 | Review and Approval of As-Built Drawings for Potable Water Network for PT-Z8-APP | 2028-04-12 → 2028-11-06 (+208d) | 2028-04-20 → 2028-11-14 (+208d) |  |
| RHD4HOASZ8APPST110 | Review and Approval of As-Built Drawings for Storm Water Network for ST-Z8-APP | 2028-04-12 → 2028-11-06 (+208d) | 2028-04-20 → 2028-11-14 (+208d) |  |
| RHD4HOASZ8APPSW120 | Review and Approval of As-Built Drawings for Sewage Network for SW-Z8-APP | 2028-04-12 → 2028-11-06 (+208d) | 2028-04-20 → 2028-11-14 (+208d) |  |
| RHD4HOASZ8APPSL170 | Review and Approval of As-Built Drawings for Street Lighting Network for SL-Z8-APP | 2028-04-17 → 2028-11-21 (+218d) | 2028-05-03 → 2028-12-07 (+218d) |  |
| RHD4HOASZ8APPCCTV210 | Review and Approval of As-Built Drawings for Security Network for CCTV-Z8-APP | 2028-03-26 → 2028-12-02 (+251d) | 2028-04-12 → 2028-12-19 (+251d) |  |
| RHD4HOASZ8APPEW100 | Review and Approval of As-Built Drawings for Road Plans and Profile for EW-Z8-APP | 2028-04-12 → 2028-12-12 (+244d) | 2028-04-20 → 2028-12-20 (+244d) |  |
| RHD4HOASZ8APPRD220 | Review and Approval of As-Built Drawings for Road Works( KERBING AND PAVEMENT ) for RD-Z8-APP | 2028-04-10 → 2028-12-14 (+248d) | 2028-04-23 → 2028-12-27 (+248d) |  |
| RHD4HOASZ8APPICT200 | Review and Approval of As-Built Drawings for Information and Communication Technologies Network for ICT-Z8-APP | 2028-04-29 → 2029-01-07 (+253d) | 2028-05-10 → 2029-01-15 (+250d) |  |
| 9253 | **RHD4-02-002-As Built Drawing Approvals-Z9** | 2027-08-22 → 2028-03-04 (+195d) | 2028-05-30 → 2029-01-24 (+239d) |  |
| RHD4HOASZ9APPLV160 | Review and Approval of As-Built Drawings for Low Voltage Network for LV-Z9-APP | 2027-08-22 → 2028-03-04 (+195d) | 2027-08-30 → 2028-03-12 (+195d) |  |
| RHD4HOASZ9APPMV150 | Review and Approval of As-Built Drawings for Medium Voltage Network for MV-Z9-APP | 2028-04-12 → 2028-11-06 (+208d) | 2028-04-30 → 2028-11-23 (+207d) |  |
| RHD4HOASZ9APPTC190 | Review and Approval of As-Built Drawings for Telecommunications Network for TC-Z9-APP | 2028-04-04 → 2028-11-11 (+221d) | 2028-04-20 → 2028-11-27 (+221d) |  |
| RHD4HOASZ9APPIRR140 | Review and Approval of As-Built Drawings for Irrigation Network for IRR-Z9-APP | 2028-04-22 → 2028-11-15 (+207d) | 2028-04-30 → 2028-11-23 (+207d) |  |
| RHD4HOASZ9APPPT130 | Review and Approval of As-Built Drawings for Potable Water Network for PT-Z9-APP | 2028-04-22 → 2028-11-15 (+207d) | 2028-04-30 → 2028-11-23 (+207d) |  |
| RHD4HOASZ9APPST110 | Review and Approval of As-Built Drawings for Storm Water Network for ST-Z9-APP | 2028-04-22 → 2028-11-15 (+207d) | 2028-04-30 → 2028-11-23 (+207d) |  |
| RHD4HOASZ9APPSW120 | Review and Approval of As-Built Drawings for Sewage Network for SW-Z9-APP | 2028-04-22 → 2028-11-15 (+207d) | 2028-04-30 → 2028-11-23 (+207d) |  |
| RHD4HOASZ9APPSL170 | Review and Approval of As-Built Drawings for Street Lighting Network for SL-Z9-APP | 2028-05-08 → 2028-12-09 (+215d) | 2028-05-30 → 2028-12-25 (+209d) | 20d → 15d |
| RHD4HOASZ9APPCCTV210 | Review and Approval of As-Built Drawings for Security Network for CCTV-Z9-APP | 2028-04-13 → 2028-12-20 (+251d) | 2028-05-01 → 2029-01-07 (+251d) |  |
| RHD4HOASZ9APPEW100 | Review and Approval of As-Built Drawings for Road Plans and Profile for EW-Z9-APP | 2028-04-22 → 2028-12-21 (+243d) | 2028-04-30 → 2028-12-30 (+244d) |  |
| RHD4HOASZ9APPRD220 | Review and Approval of As-Built Drawings for Road Works( KERBING AND PAVEMENT ) for RD-Z9-APP | 2028-04-24 → 2028-12-28 (+248d) | 2028-05-15 → 2029-01-15 (+245d) |  |
| RHD4HOASZ9APPICT200 | Review and Approval of As-Built Drawings for Information and Communication Technologies Network for ICT-Z9-APP | 2028-05-11 → 2029-01-16 (+250d) | 2028-05-20 → 2029-01-24 (+249d) |  |
| 9254 | **RHD4-02-002-As Built Drawing Approvals-Tunne 1 - TUN1** | 2027-10-18 → 2028-05-20 (+215d) | 2027-11-28 → 2028-06-29 (+214d) |  |
| RHD4HOASTUN1APP1000 | Review and Approval of As-Built Drawings for TUNNEL 1 (PLANS) -Z5 for -TUN1-APP | 2027-10-18 → 2028-05-20 (+215d) | 2027-10-31 → 2028-06-01 (+214d) |  |
| RHD4HOASTUN1APP1100 | Review and Approval of As-Built Drawings for TUNNEL 1 (SECTIONS) -Z5 for -TUN1-APP | 2027-11-01 → 2028-06-03 (+215d) | 2027-11-14 → 2028-06-15 (+214d) |  |
| RHD4HOASTUN1APP1200 | Review and Approval of As-Built Drawings for TUNNEL 1 (BBS) -Z5 for -TUN1-APP | 2027-11-15 → 2028-06-17 (+215d) | 2027-11-28 → 2028-06-29 (+214d) |  |
| 9256 | **RHD4-02-002-As Built Drawing Approvals-Sewage Lift Station 1 - SWL1** | 2027-10-04 → 2028-05-02 (+211d) | 2027-11-28 → 2028-06-29 (+214d) |  |
| RHD4HOASSWL1APP1000 | Review and Approval of As-Built Drawings for Sewage Lift Station 1 - Z3 - Structure Package for -SWL1-APP | 2027-10-04 → 2028-05-02 (+211d) | 2027-10-17 → 2028-05-18 (+214d) |  |
| RHD4HOASSWL1APP1100 | Review and Approval of As-Built Drawings for Sewage Lift Station 1 - Z3 - Architecture Package for -SWL1-APP | 2027-10-18 → 2028-05-20 (+215d) | 2027-10-31 → 2028-06-01 (+214d) |  |
| RHD4HOASSWL1APP1200 | Review and Approval of As-Built Drawings for Sewage Lift Station 1 - Z3 - Mechanical Package for -SWL1-APP | 2027-11-01 → 2028-06-03 (+215d) | 2027-11-14 → 2028-06-15 (+214d) |  |
| RHD4HOASSWL1APP1300 | Review and Approval of As-Built Drawings for Sewage Lift Station 1 - Z3 - Electrical Package for -SWL1-APP | 2027-11-15 → 2028-06-17 (+215d) | 2027-11-28 → 2028-06-29 (+214d) |  |
| 9258 | **RHD4-02-002-As Built Drawing Approvals-Storm Lift Station 1 - STL1** | 2028-01-11 → 2028-08-24 (+226d) | 2028-02-09 → 2028-10-24 (+258d) |  |
| RHD4HOASSTL1APP1000 | Review and Approval of As-Built Drawings for Storm Lift Station 1 - Z5 - Structure Package for -STL1-APP | 2028-01-11 → 2028-08-24 (+226d) | 2028-01-16 → 2028-08-29 (+226d) |  |
| RHD4HOASSTL1APP1100 | Review and Approval of As-Built Drawings for Storm Lift Station 1 - Z5 - Architecture Package for -STL1-APP | 2028-01-24 → 2028-10-08 (+258d) | 2028-01-29 → 2028-10-12 (+257d) |  |
| RHD4HOASSTL1APP1200 | Review and Approval of As-Built Drawings for Storm Lift Station 1 - Z5 - Mechanical Package for -STL1-APP | 2028-01-30 → 2028-10-14 (+258d) | 2028-02-03 → 2028-10-18 (+258d) |  |
| RHD4HOASSTL1APP1300 | Review and Approval of As-Built Drawings for Storm Lift Station 1 - Z5 - Electrical Package for -STL1-APP | 2028-02-05 → 2028-10-19 (+257d) | 2028-02-09 → 2028-10-24 (+258d) |  |
| 9260 | **RHD4-02-002-Operational Spares - OS** | 2028-02-24 → 2028-11-04 (+254d) | 2028-03-05 → 2028-11-09 (+249d) |  |
| RHD4GNHOOS1214 | Supply Operational Spares - OS | 2028-02-24 → 2028-11-04 (+254d) | 2028-03-05 → 2028-11-09 (+249d) |  |
| 9261 | **RHD4-02-002-Warranties and Guarantees - WG** | 2028-03-06 → 2028-11-11 (+250d) | 2028-03-15 → 2028-11-23 (+253d) |  |
| RHD4GNHOWG1215 | Warranties and Guarantess - WG | 2028-03-06 → 2028-11-11 (+250d) | 2028-03-15 → 2028-11-23 (+253d) | 9d → 12d |
| 9262 | **RHD4-02-002-Training and Manuals** | 2028-02-14 → 2028-10-25 (+254d) | 2028-03-19 → 2028-11-27 (+253d) |  |
| 9263 | **RHD4-02-002-Training** | 2028-03-16 → 2028-11-25 (+254d) | 2028-03-19 → 2028-11-27 (+253d) |  |
| RHD4GNHOFM1216 | Training - FM | 2028-03-16 → 2028-11-25 (+254d) | 2028-03-19 → 2028-11-27 (+253d) |  |
| 9264 | **RHD4-02-002-Manuals** | 2028-02-14 → 2028-10-25 (+254d) | 2028-02-23 → 2028-11-02 (+253d) |  |
| RHD4GNHOFM1217 | Manuals - FM | 2028-02-14 → 2028-10-25 (+254d) | 2028-02-23 → 2028-11-02 (+253d) |  |
| 9265 | **RHD4-02-002-Demobilization** | 2028-05-01 → 2028-12-31 (+244d) | 2028-05-30 → 2029-01-25 (+240d) |  |
| 9266 | **RHD4-02-002-Demobilization of Manpoer** | 2028-05-01 → 2028-12-31 (+244d) | 2028-05-08 → 2029-01-03 (+240d) |  |
| RHD4GNHODMOB1000 | Demobilize Manpower - DMOB | 2028-05-01 → 2028-12-31 (+244d) | 2028-05-08 → 2029-01-03 (+240d) |  |
| 9267 | **RHD4-02-002-Removal of Euipment from the Site** | 2028-05-09 → 2029-01-04 (+240d) | 2028-05-13 → 2029-01-08 (+240d) |  |
| RHD4GNHODMOB1100 | Removal Equipments from The site - DMOB | 2028-05-09 → 2029-01-04 (+240d) | 2028-05-13 → 2029-01-08 (+240d) |  |
| 9268 | **RHD4-02-002-Site Clean - up** | 2028-05-14 → 2029-01-09 (+240d) | 2028-05-18 → 2029-01-14 (+241d) |  |
| RHD4GNHODMOB1200 | Site Clean Up - DMOB | 2028-05-14 → 2029-01-09 (+240d) | 2028-05-18 → 2029-01-14 (+241d) |  |
| 9269 | **RHD4-02-002-Removal of Site Offices and Structure** | 2028-05-20 → 2029-01-15 (+240d) | 2028-05-23 → 2029-01-18 (+240d) |  |
| RHD4GNHODMOB1300 | Removal of Site Offices and Structures - DMOB | 2028-05-20 → 2029-01-15 (+240d) | 2028-05-23 → 2029-01-18 (+240d) |  |
| 9270 | **RHD4-02-002-Restoration of Ground Surfaces** | 2028-05-24 → 2029-01-20 (+241d) | 2028-05-30 → 2029-01-25 (+240d) |  |
| RHD4GNHODMOB1400 | Restoration of Ground Surface - DMOB | 2028-05-24 → 2029-01-20 (+241d) | 2028-05-30 → 2029-01-25 (+240d) |  |
