# Developing Infrastructure Networks in Riyadh's Fourth Industrial City-RVSD#01-REV01-1 baseline modif

How a schedule from Primavera P6 changed from version to version. A marks actual dates.

## Version 3 (data date 2026-11-09, saved 2026-11-11, file RDH4-02-002- WPR 50 - 09-11-2026.xer)

| ID | WBS | Task | Duration | Start | Finish | Predecessors | Complete | Total float |
| --- | --- | --- | --- | --- | --- | --- | --- | --- |
|  | 19 | **RHD4-02-002-Authorities Permits & Approval - AT** |  | 2025-11-30 | 2026-01-08 |  |  |  |
| RHD4GNPERMITAT1000 |  | Electrical Network Authorities Permits & Approval - AT | 10d | 2025-11-30 A | 2025-12-11 A | RHD4GNPSMIS1000 SS | 100% |  |
| RHD4GNPERMITAT2000 |  | Telecommunication System Authorities Permits & Approval - AT | 10d | 2025-11-30 A | 2025-12-11 A | RHD4GNPSMIS1000 SS, RHD4GNPERMITAT1000 | 100% |  |
| RHD4GNPERMITENV3000 |  | Enviromental Permits & Aproval - ENV | 30d | 2025-11-30 A | 2026-01-08 A | RHD4GNPSMIS1000 SS | 100% |  |
|  | 3 | **RHD4-02-002-Milestones - MIS** |  | 2025-11-30 | 2029-01-17 |  |  |  |
|  | 4 | **RHD4-02-002-Contractual Milestones** |  | 2025-11-30 | 2029-01-17 |  |  |  |
| RHD4GNPSMIS1000 |  | Project Start - MIS | 0d | 2025-11-30 A | 2025-11-30 A |  | 100% |  |
| RHD4GNMOBMIS1100 |  | Mobilization Finish - MIS | 0d | 2025-12-29 A | 2025-12-29 A | RHD4GNMOB1300 FF, RHD4GNMOB1100 FF, RHD4GNMOB1500 FF, RHD4GNMOB1400 FF | 100% |  |
| RHD4GNMRDMIS1200 |  | Submittal and Approval of Project Management Plan - MIS | 0d | 2026-11-23 | 2026-11-23 | RHD4GNPPPMP1100 FF, RHD4GNPPBL1100 FF, RHD4GNPPHSE1100 FF, RHD4GNPPLOG1100 FF, RHD4GNPPORG1100 FF |  | 554d |
| RHD4GNENMIS1300 |  | Submittal and Approval of Shop Drawings and Material Approvals - MIS | 0d | 2026-12-07 | 2026-12-07 | RHD4ENSDZ1APPEW100 FF, RHD4ENSDZ1APPST110 FF, RHD4ENSDZ1APPSW120 FF, RHD4ENSDZ1APPPT130 FF, RHD4ENSDZ1APPIRR140 FF, RHD4ENSDZ1APPMV150 FF, RHD4ENSDZ1APPRD220 FF, RHD4ENSDZ1APPLV160 FF, RHD4ENSDZ1APPSL170 FF, RHD4ENSDZ1APPTC190 FF, RHD4ENSDZ1APPICT200 FF, RHD4ENSDZ1APPCCTV210 FF, RHD4ENSDZ2APPEW100 FF, RHD4ENSDZ2APPST110 FF, RHD4ENSDZ2APPSW120 FF, RHD4ENSDZ2APPPT130 FF, RHD4ENSDZ2APPIRR140 FF, RHD4ENSDZ2APPMV150 FF, RHD4ENSDZ2APPRD220 FF, RHD4ENSDZ2APPLV160 FF, RHD4ENSDZ2APPSL170 FF, RHD4ENSDZ2APPTC190 FF, RHD4ENSDZ2APPICT200 FF, RHD4ENSDZ2APPCCTV210 FF, RHD4ENSDZ3APPEW100 FF, RHD4ENSDZ3APPST110 FF, RHD4ENSDZ3APPSW120 FF, RHD4ENSDZ3APPPT130 FF, RHD4ENSDZ3APPIRR140 FF, RHD4ENSDZ3APPMV150 FF, RHD4ENSDZ3APPRD220 FF, RHD4ENSDZ3APPLV160 FF, RHD4ENSDZ3APPSL170 FF, RHD4ENSDZ3APPTC190 FF, RHD4ENSDZ3APPICT200 FF, RHD4ENSDZ3APPCCTV210 FF, RHD4ENSDZ4APPEW100 FF, RHD4ENSDZ4APPST110 FF, RHD4ENSDZ4APPSW120 FF, RHD4ENSDZ4APPPT130 FF, RHD4ENSDZ4APPIRR140 FF, RHD4ENSDZ4APPMV150 FF, RHD4ENSDZ4APPRD220 FF, RHD4ENSDZ4APPLV160 FF, RHD4ENSDZ4APPSL170 FF, RHD4ENSDZ4APPTC190 FF, RHD4ENSDZ4APPICT200 FF, RHD4ENSDZ4APPCCTV210 FF, RHD4ENSDZ5APPEW100 FF, RHD4ENSDZ5APPST110 FF, RHD4ENSDZ5APPSW120 FF, RHD4ENSDZ5APPPT130 FF, RHD4ENSDZ5APPIRR140 FF, RHD4ENSDZ5APPMV150 FF, RHD4ENSDZ5APPRD220 FF, RHD4ENSDZ5APPLV160 FF, RHD4ENSDZ5APPSL170 FF, RHD4ENSDZ5APPTC190 FF, RHD4ENSDZ5APPICT200 FF, RHD4ENSDZ5APPCCTV210 FF, RHD4ENSDZ6APPEW100 FF, RHD4ENSDZ6APPST110 FF, RHD4ENSDZ6APPSW120 FF, RHD4ENSDZ6APPPT130 FF, RHD4ENSDZ6APPIRR140 FF, RHD4ENSDZ6APPMV150 FF, RHD4ENSDZ6APPRD220 FF, RHD4ENSDZ6APPLV160 FF, RHD4ENSDZ6APPSL170 FF, RHD4ENSDZ6APPTC190 FF, RHD4ENSDZ6APPICT200 FF, RHD4ENSDZ6APPCCTV210 FF, RHD4ENSDZ7APPEW100 FF, RHD4ENSDZ7APPST110 FF, RHD4ENSDZ7APPSW120 FF, RHD4ENSDZ7APPPT130 FF, RHD4ENSDZ7APPIRR140 FF, RHD4ENSDZ7APPMV150 FF, RHD4ENSDZ7APPRD220 FF, RHD4ENSDZ7APPLV160 FF, RHD4ENSDZ7APPSL170 FF, RHD4ENSDZ7APPTC190 FF, RHD4ENSDZ7APPICT200 FF, RHD4ENSDZ7APPCCTV210 FF, RHD4ENSDZ8APPEW100 FF, RHD4ENSDZ8APPST110 FF, RHD4ENSDZ8APPSW120 FF, RHD4ENSDZ8APPPT130 FF, RHD4ENSDZ8APPIRR140 FF, RHD4ENSDZ8APPMV150 FF, RHD4ENSDZ8APPRD220 FF, RHD4ENSDZ8APPLV160 FF, RHD4ENSDZ8APPSL170 FF, RHD4ENSDZ8APPTC190 FF, RHD4ENSDZ8APPICT200 FF, RHD4ENSDZ8APPCCTV210 FF, RHD4ENSDZ9APPEW100 FF, RHD4ENSDZ9APPST110 FF, RHD4ENSDZ9APPSW120 FF, RHD4ENSDZ9APPPT130 FF, RHD4ENSDZ9APPIRR140 FF, RHD4ENSDZ9APPMV150 FF, RHD4ENSDZ9APPRD220 FF, RHD4ENSDZ9APPLV160 FF, RHD4ENSDZ9APPSL170 FF, RHD4ENSDZ9APPTC190 FF, RHD4ENSDZ9APPICT200 FF, RHD4ENSDZ9APPCCTV210 FF, RHD4ENTUN1APPSTC1000 FF, RHD4ENSWL1APPSTC1000 FF, RHD4ENSWL1APPELE1300 FF, RHD4ENSTL1APPSTC1000 FF, RHD4ENSTL1APPELE1300 FF, RHD4ENMSEW2000 FF, RHD4ENMSTUN2000 FF, RHD4ENMSASPH2000 FF, RHD4ENMSST2000 FF, RHD4ENMSSW2000 FF, RHD4ENMSPT2000 FF, RHD4ENMSRR2000 FF, RHD4ENMSMV2000 FF, RHD4ENMSLV2000 FF, RHD4ENMSSL2000 FF, RHD4ENMSER2000 FF, RHD4ENMSRD2000 FF, RHD4ENMSBC2000 FF, RHD4ENMSTUN2010 FF, RHD4ENMSASPH2010 FF, RHD4ENMSST2010 FF, RHD4ENMSSW2010 FF, RHD4ENMSPT2010 FF, RHD4ENMSRR2010 FF, RHD4ENMSMV2010 FF, RHD4ENMSLV2010 FF, RHD4ENMSSL2010 FF, RHD4ENMSER2010 FF, RHD4ENMSRD2010 FF, RHD4ENMSBC2010 FF, RHD4ENMARAPPEW100 FF, RHD4ENMARSUBEW100 FF, RHD4ENMARSUBST100 FF, RHD4ENMARSUBST200 FF, RHD4ENMARSUBST400 FF, RHD4ENMARSUBST300 FF, RHD4ENMARSUBST500 FF, RHD4ENMARSUBST600 FF, RHD4ENMARSUBST700 FF, RHD4ENMARSUBST800 FF, RHD4ENMARSUBSW200 FF, RHD4ENMARSUBSW100 FF, RHD4ENMARSUBSW300 FF, RHD4ENMARSUBSW400 FF, RHD4ENMARSUBSW500 FF, RHD4ENMARSUBSW600 FF, RHD4ENMARSUBPT100 FF, RHD4ENMARSUBPT200 FF, RHD4ENMARSUBPT500 FF, RHD4ENMARSUBPT300 FF, RHD4ENMARSUBPT400 FF, RHD4ENMARSUBIRR100 FF, RHD4ENMARSUBIRR200 FF, RHD4ENMARSUBIRR400 FF, RHD4ENMARSUBIRR300 FF, RHD4ENMARSUBMV100 FF, RHD4ENMARSUBMV600 FF, RHD4ENMARSUBMV700 FF, RHD4ENMARSUBMV200 FF, RHD4ENMARSUBMV300 FF, RHD4ENMARSUBMV400 FF, RHD4ENMARSUBMV500 FF, RHD4ENMARSUBLV100 FF, RHD4ENMARSUBLV500 FF, RHD4ENMARSUBLV200 FF, RHD4ENMARSUBLV300 FF, RHD4ENMARSUBLV400 FF, RHD4ENMARSUBLV600 FF, RHD4ENMARSUBSL100 FF, RHD4ENMARSUBSL500 FF, RHD4ENMARSUBSL300 FF, RHD4ENMARSUBSL200 FF, RHD4ENMARSUBSL400 FF, RHD4ENMARSUBTC100 FF, RHD4ENMARSUBTC200 FF, RHD4ENMARSUBTC300 FF, RHD4ENMARSUBICT100 FF, RHD4ENMARSUBICT200 FF, RHD4ENMARSUBICT300 FF, RHD4ENMARSUBCCTV100 FF, RHD4ENMARSUBCCTV300 FF, RHD4ENMARSUBCCTV400 FF, RHD4ENMARSUBCCTV200 FF, RHD4ENMARSUBCCTV500 FF, RHD4ENMARSUBRD100 FF, RHD4ENMARSUBRD200 FF, RHD4ENMARSUBRD300 FF, RHD4ENMARSUBRD700 FF, RHD4ENMARSUBRD400 FF, RHD4ENMARSUBRD500 FF, RHD4ENMARSUBRD600 FF, RHD4ENMARSUBLFS200 FF, RHD4ENMARSUBLFS2000 FF, RHD4ENMARSUBLFS300 FF, RHD4ENMARSUBLFS900 FF, RHD4ENMARSUBLFS2300 FF, RHD4ENMARSUBLFS2400 FF, RHD4ENMARSUBLFS400 FF, RHD4ENMARSUBLFS1000 FF, RHD4ENMARSUBLFS2100 FF, RHD4ENMARSUBLFS100 FF, RHD4ENMARSUBLFS1200 FF, RHD4ENMARSUBLFS2500 FF, RHD4ENMARSUBLFS500 FF, RHD4ENMARSUBLFS1300 FF, RHD4ENMARSUBLFS600 FF, RHD4ENMARSUBLFS1400 FF, RHD4ENMARSUBLFS1500 FF, RHD4ENMARSUBLFS2900 FF, RHD4ENMARSUBLFS700 FF, RHD4ENMARSUBLFS1600 FF, RHD4ENMARSUBLFS1700 FF, RHD4ENMARSUBLFS2600 FF, RHD4ENMARSUBLFS1900 FF, RHD4ENMARSUBLFS2700 FF, RHD4ENMARSUBLFS1800 FF, RHD4ENMARSUBLFS2200 FF, RHD4ENMARAPPST100 FF, RHD4ENMARAPPST200 FF, RHD4ENMARAPPST400 FF, RHD4ENMARAPPST300 FF, RHD4ENMARAPPST500 FF, RHD4ENMARAPPST600 FF, RHD4ENMARAPPST700 FF, RHD4ENMARAPPST800 FF, RHD4ENMARAPPPT100 FF, RHD4ENMARAPPPT200 FF, RHD4ENMARAPPPT500 FF, RHD4ENMARAPPPT300 FF, RHD4ENMARAPPPT400 FF, RHD4ENMARAPPPT600 FF, RHD4ENMARAPPIRR100 FF, RHD4ENMARAPPIRR200 FF, RHD4ENMARAPPIRR400 FF, RHD4ENMARAPPIRR300 FF, RHD4ENMARAPPIRR500 FF, RHD4ENMARAPPMV100 FF, RHD4ENMARAPPMV600 FF, RHD4ENMARAPPMV700 FF, RHD4ENMARAPPMV200 FF, RHD4ENMARAPPMV300 FF, RHD4ENMARAPPMV400 FF, RHD4ENMARAPPMV500 FF, RHD4ENMARAPPLV100 FF, RHD4ENMARAPPLV500 FF, RHD4ENMARAPPLV200 FF, RHD4ENMARAPPLV300 FF, RHD4ENMARAPPLV400 FF, RHD4ENMARAPPLV600 FF, RHD4ENMARAPPSL100 FF, RHD4ENMARAPPSL500 FF, RHD4ENMARAPPSL300 FF, RHD4ENMARAPPSL200 FF, RHD4ENMARAPPSL400 FF, RHD4ENMARAPPTC100 FF, RHD4ENMARAPPTC200 FF, RHD4ENMARAPPTC300 FF, RHD4ENMARAPPICT100 FF, RHD4ENMARAPPICT200 FF, RHD4ENMARAPPICT300 FF, RHD4ENMARAPPCCTV100 FF, RHD4ENMARAPPCCTV300 FF, RHD4ENMARAPPCCTV400 FF, RHD4ENMARAPPCCTV200 FF, RHD4ENMARAPPCCTV500 FF, RHD4ENMARAPPRD100 FF, RHD4ENMARAPPRD200 FF, RHD4ENMARAPPRD300 FF, RHD4ENMARAPPRD700 FF, RHD4ENMARAPPRD400 FF, RHD4ENMARAPPRD500 FF, RHD4ENMARAPPRD600 FF, RHD4ENMARAPPLFS200 FF, RHD4ENMARAPPLFS800 FF, RHD4ENMARAPPLFS2000 FF, RHD4ENMARAPPLFS3000 FF, RHD4ENMARAPPLFS300 FF, RHD4ENMARAPPLFS900 FF, RHD4ENMARAPPLFS2300 FF, RHD4ENMARAPPLFS2400 FF, RHD4ENMARAPPLFS400 FF, RHD4ENMARAPPLFS1000 FF, RHD4ENMARAPPLFS1100 FF, RHD4ENMARAPPLFS2100 FF, RHD4ENMARAPPLFS100 FF, RHD4ENMARAPPLFS1200 FF, RHD4ENMARAPPLFS2500 FF, RHD4ENMARAPPLFS500 FF, RHD4ENMARAPPLFS1300 FF, RHD4ENMARAPPLFS2800_R FF, RHD4ENMARAPPLFS600 FF, RHD4ENMARAPPLFS700 FF, RHD4ENMARAPPLFS1400 FF, RHD4ENMARAPPLFS1500 FF, RHD4ENMARAPPLFS1600 FF, RHD4ENMARAPPLFS1700 FF, RHD4ENMARAPPLFS1900 FF, RHD4ENMARAPPLFS2600 FF, RHD4ENMARAPPLFS2700 FF, RHD4ENMARAPPLFS2900 FF, RHD4ENMARAPPLFS1800 FF, RHD4ENMARAPPLFS2200 FF, RHD4ENMARAPPSW200 FF, RHD4ENMARAPPSW100 FF, RHD4ENMARAPPSW300 FF, RHD4ENMARAPPSW400 FF, RHD4ENMARAPPSW500 FF, RHD4ENMARAPPSW600 FF, RHD4ENMARAPPTU100 FF, RHD4GNPPMAT1100 FF, RHD4ENMARSUBSL400, RHD4GNPPSD1100 FF, RHD4ENSDZ9SUBCCTV210, RHD4ENSDZ8SUBCCTV210, RHD4ENSDZ7SUBCCTV210, RHD4ENSDZ6SUBCCTV210, RHD4ENSDZ5SUBCCTV210, RHD4ENSDZ4SUBCCTV210, RHD4ENSDZ3SUBCCTV210, RHD4ENSDZ2SUBCCTV210, RHD4ENSDZ1SUBCCTV210, RHD4ENSDZ6SUBRD220 FF, RHD4ENMARSUBLFS800 FF, RHD4ENMARSUBLFS1100 FF, RHD4ENMARSUBIRR500 FF, RHD4ENMARSUBPT600 FF, RHD4ENSWL1APPARC1100 FF, RHD4ENSDSWL1SUB2000 FF, RHD4ENSDSTL1SUB2000 FF, RHD4ENSWL1APPMEC1200 FF, RHD4ENSDSWL1SUB3000 FF, RHD4ENSDSTL1SUB3000 FF, RHD4ENSTL1APPARC1100 FF, RHD4ENSTL1APPMEC1200 FF, RHD4ENTUN1APPSTC1200 FF, RHD4ENSDTUN1SUB1200 FF, RHD4ENTUN1APPSTC1100 FF, RHD4ENSDTUN1SUB1100 FF, RHD4ENMARSUBLFS2800 FF |  | 540d |
| RHD4GNPROMIS1400 |  | Completion of material Delivery - MIS - (PO Issuance) | 0d | 2026-12-23 | 2026-12-23 | RHD4PRSHLPOST1000 FF, RHD4PRSHLPOST1100 FF, RHD4PRSHLPOST1200 FF, RHD4PRSHLPOST1300 FF, RHD4PRSHLPOST1400 FF, RHD4PRSHLPOST1500 FF, RHD4PRSHLPOST1700 FF, RHD4PRSHLPOSW1000 FF, RHD4PRSHLPOSW1100 FF, RHD4PRSHLPOSW1200 FF, RHD4PRSHLPOSW1300 FF, RHD4PRSHLPOSW1400 FF, RHD4PRSHLPOPT1000 FF, RHD4PRSHLPOPT1100 FF, RHD4PRSHLPOPT1200 FF, RHD4PRSHLPOPT1300 FF, RHD4PRSHLPOPT1400 FF, RHD4PRSHLPOPT1500 FF, RHD4PRSHLPOIRR1000 FF, RHD4PRSHLPOIRR1100 FF, RHD4PRSHLPOIRR1200 FF, RHD4PRSHLPOIRR1300 FF, RHD4PRSHLPOIRR1400 FF, RHD4PRSHLPOMV1000 FF, RHD4PRSHLPOMV1100 FF, RHD4PRSHLPOMV1200 FF, RHD4PRSHLPOMV1300 FF, RHD4PRSHLPOMV1400 FF, RHD4PRLOLPOMV1500 FF, RHD4PRLOLPOMV1600 FF, RHD4PRSHLPOLV1000 FF, RHD4PRSHLPOLV1100 FF, RHD4PRSHLPOLV1200 FF, RHD4PRSHLPOLV1300 FF, RHD4PRSHLPOLV1400 FF, RHD4PRSHLPOLV1500 FF, RHD4PRSHLPOSL1000 FF, RHD4PRSHLPOSL1100 FF, RHD4PRSHLPOSL1200 FF, RHD4PRSHLPOSL1300 FF, RHD4PRSHLPOSL1400 FF, RHD4PRSHLPOTC1000 FF, RHD4PRSHLPOTC1100 FF, RHD4PRSHLPOTC1200 FF, RHD4PRSHLPOICT1000 FF, RHD4PRSHLPOICT1100 FF, RHD4PRSHLPOICT1200 FF, RHD4PRSHLPOCCTV1000 FF, RHD4PRSHLPOCCTV1100 FF, RHD4PRSHLPOCCTV1200 FF, RHD4PRSHLPOCCTV1300 FF, RHD4PRSHLPORD1000 FF, RHD4PRSHLPORD1100 FF, RHD4PRSHLPORD1200 FF, RHD4PRSHLPORD1300 FF, RHD4PRSHLPORD1400 FF, RHD4PRSHLPORD1500 FF, RHD4PRSHLPORD1600 FF, RHD4PRSHLPOLFS1000 FF, RHD4PRSHLPOLFS1100 FF, RHD4PRSHLPOLFS1200 FF, RHD4PRSHLPOLFS1300 FF, RHD4PRSHLPOLFS1400 FF, RHD4PRSHLPOLFS1500 FF, RHD4PRSHLPOLFS1600 FF, RHD4PRSHLPOLFS1700 FF, RHD4PRSHLPOLFS1800 FF, RHD4PRSHLPOLFS1900 FF, RHD4PRLOLPOLFS2000 FF, RHD4PRSHLPOLFS2100 FF, RHD4PRSHLPOLFS2200 FF, RHD4PRSHLPOLFS2300 FF, RHD4PRSHLPOLFS2400 FF, RHD4PRSHLPOLFS2500 FF, RHD4PRSHLPOLFS2600 FF, RHD4PRSHLPOLFS2700 FF, RHD4PRSHLPOLFS2800 FF, RHD4PRSHLPOLFS2900 FF, RHD4PRSHLPOLFS3000 FF, RHD4PRLOLPOCCTV1000 FF, RHD4PRLOLPOLFS1000 FF, RHD4PRLOLPOLFS1100 FF, RHD4PRLOLPOLFS1200 FF, RHD4PRLOLPOLFS1300 FF, RHD4PRLOLPOLFS1400 FF, RHD4PRLOLPOLFS1500 FF, RHD4PRLOLPOLFS1600 FF, RHD4PRLOLPOLFS1700 FF, RHD4PRSHLPOST1600 FF, RHD4PRSHLPOSL1300, RHD4GNPPMAT1100 FF, RHD4ENMARSUBSL400 FF |  | 524d |
| RHD4GN10MMIS1500 |  | Roads Finish Milestone - MIS | 0d | 2027-04-21 | 2027-04-21 | RHD4CZ4L09RD3100 FF, RHD4CZ4L09RD3100, RHD4CZ8A011RD3100 FF, RHD4CZ7RA03RD3100 FF, RHD4CZ8C014RD3100 FF, RHD4CZ8RA04RD3100 FF, RHD4CZ7L03RD3100 FF, RHD4CZ9L06RD3100 FF, RHD4CZ9C071RD3100 FF, RHD4CZ7L131RD3100 FF, RHD4CZ7C032RD3100 FF, RHD4CZ7C02RD3100 FF, RHD4CZ8L04RD3100 FF, RHD4CZ7RA05RD3100 FF, RHD4CZ3C083RD3100 FF, RHD4CZ7C013RD3100 FF, RHD4CZ7A012RD3100 FF, RHD4CZ3C011RD3100 FF, RHD4CZ9L02RD3100 FF, RHD4CZ2C082RD3100 FF, RHD4CZ7L015RD3100 FF, RHD4CZ2L011RD3100 FF, RHD4CZ9L05RD3100 FF, RHD4CZ2L102RD3100 FF, RHD4CZ1C081RD3100 FF, RHD4CZ3L122RD3100 FF, RHD4CZ4C012RD3100 FF, RHD4CZ1L101RD3100 FF, RHD4CZ4L014RD3100 FF, RHD4CZ5L07RD3100 FF, RHD4CZ5L016RD3100 FF, RHD4CZ5RA07RD3100 FF, RHD4CZ5A014RD3100 FF, RHD4CZ5C061RD3100 FF, RHD4CZ6RA01RD3100 FF, RHD4CZ6C062RD3100 FF, RHD4CZ4A013RD3100 FF, RHD4CZ4C031RD3100 FF, RHD4CZ4RA02RD3100 FF, RHD4CZ6A015RD3100 FF, RHD4CZ5L08RD3100 FF, RHD4CZ4L01RD3100 FF, RHD4CZ6A02RD3100 FF, RHD4CZ6C052RD3100 FF, RHD4CZ5C051RD3100 FF |  | 405d |
| RHD4GN10MMIS1510 |  | Medium Voltage Finish Milestone - MIS | 0d | 2027-11-04 | 2027-11-04 | RHD4CZ7L015MV3300 FF, RHD4CZ1L101MV3401 FF, RHD4CZ7L03MV2400 FF, RHD4CZ7L03MV3400 FF, RHD4CZ7C02MV2400 FF, RHD4CZ6C062MV2400 FF, RHD4CZ3L122MV2400 FF, RHD4CZ6C052MV2400 FF, RHD4CZ6C062MV2400, RHD4CZ6C062MV3400 FF, RHD4CZ6C052MV2400, RHD4CZ6C052MV3400 FF, RHD4CZ5C051MV2400 FF, RHD4CZ5RA07MV3400 FF, RHD4CZ5C061MV2400 FF, RHD4CZ5C061MV3400 FF, RHD4CZ5L08MV2400 FF, RHD4CZ5L08MV3400 FF, RHD4CZ5A014MV2400 FF, RHD4CZ5A014MV3400 FF, RHD4CZ5L07MV2400 FF, RHD4CZ4L01MV2400 FF, RHD4CZ4A013MV2400 FF, RHD4CZ4C031MV2400 FF, RHD4CZ4L014MV2400 FF, RHD4CZ4L014MV3400 FF, RHD4CZ4L09MV3400 FF, RHD4CZ8A011MV2400 FF, RHD4CZ8A011MV3400 FF, RHD4CZ8RA04MV3400 FF, RHD4CZ8C014MV3400 FF, RHD4CZ9C071MV2400 FF, RHD4CZ9L05MV2400 FF, RHD4CZ9L06MV2400 FF, RHD4CZ9L06MV3400 FF, RHD4CZ9L02MV2400 FF, RHD4CZ9L02MV3400 FF, RHD4CZ7C032MV2400 FF, RHD4CZ7L03MV2400, RHD4CZ7L03MV3400, RHD4CZ7L131MV3400 FF, RHD4CZ7L015MV2400 FF, RHD4CZ7A012MV2400 FF, RHD4CZ7C02MV2400, RHD4CZ7C02MV3400 FF, RHD4CZ2L102MV3400 FF, RHD4CZ2L011MV2400 FF, RHD4CZ1C081MV3400 FF, RHD4CZ3C011MV2400 FF, RHD4CZ3C011MV3400 FF, RHD4CZ3L122MV2400, RHD4CZ3L122MV3400 FF, RHD4CZ5L07MV3401 FF, RHD4CZ4A013MV3401 FF, RHD4CZ4L09MV5400 FF, RHD4CZ1C081MV4200 FF |  | 208d |
| RHD4GN18MMIS1600 |  | Deep Network Finish Milestone - MIS | 0d | 2027-11-24 | 2027-11-24 | RHD4CZ7L015IRR2402 FF, RHD4CZ7L015IRR3203 FF, RHD4CZ7A012IRR1503 FF, RHD4CZ1L101IRR1504 FF, RHD4CZ1L101IRR3200 FF, RHD4CZ1C081IRR1504 FF, RHD4CZ1C081IRR3200 FF, RHD4CZ3C011IRR2402 FF, RHD4CZ3C011IRR3203 FF, RHD4CZ3L122IRR1500 FF, RHD4CZ3L122IRR1504 FF, RHD4CZ3L122IRR3200 FF, RHD4CZ3L122IRR2401 FF, RHD4CZ3L122IRR3202 FF, RHD4CZ3C083IRR1504 FF, RHD4CZ9C071PT1501 FF, RHD4CZ9C071PT1502 FF, RHD4CZ9L05PT1501 FF, RHD4CZ9L06PT1500 FF, RHD4CZ9L06PT1501 FF, RHD4CZ9L02PT1500 FF, RHD4CZ9L02PT1501 FF, RHD4CZ2L102PT1500 FF, RHD4CZ2L102PT1501 FF, RHD4CZ2L011PT1501 FF, RHD4CZ2C082PT1502 FF, RHD4CZ7C032PT1502 FF, RHD4CZ7C032PT1501 FF, RHD4CZ7L03PT1500 FF, RHD4CZ7L03PT1501 FF, RHD4CZ7L131PT1500 FF, RHD4CZ7L131PT1501 FF, RHD4CZ7L015PT1500 FF, RHD4CZ7L015PT1501 FF, RHD4CZ7A012PT1503 FF, RHD4CZ7C02PT1501 FF, RHD4CZ1L101PT1501 FF, RHD4CZ1L101PT1500 FF, RHD4CZ1C081PT1502 FF, RHD4CZ3C011PT1503 FF, RHD4CZ3C011PT1504 FF, RHD4CZ3L122PT1503 FF, RHD4CZ3C083PT1503 FF, RHD4CZ6C062IRR1500 FF, RHD4CZ6A015IRR1500 FF, RHD4CZ6C052IRR1500 FF, RHD4CZ5C051IRR1500 FF, RHD4CZ5RA07IRR1502 FF, RHD4CZ5C061IRR1502 FF, RHD4CZ5L08IRR1500 FF, RHD4CZ5L08IRR1502 FF, RHD4CZ5L016IRR1502 FF, RHD4CZ5L016IRR1504 FF, RHD4CZ5A014IRR1503 FF, RHD4CZ5L07IRR1500 FF, RHD4CZ4A013IRR1503 FF, RHD4CZ4L014IRR1500 FF, RHD4CZ4L014IRR1503 FF, RHD4CZ4L09IRR1500 FF, RHD4CZ8L04IRR1500 FF, RHD4CZ9C071IRR1500 FF, RHD4CZ9C071IRR1507 FF, RHD4CZ9L05IRR1507 FF, RHD4CZ9L06IRR1500 FF, RHD4CZ9L02IRR1500 FF, RHD4CZ9L02IRR1507 FF, RHD4CZ2L102IRR1504 FF, RHD4CZ2C082IRR1504 FF, RHD4CZ7L03IRR1500 FF, RHD4CZ7L03IRR1504 FF, RHD4CZ7L131IRR1500 FF, RHD4CZ7C013IRR1504 FF, RHD4CZ7L015IRR1500 FF, RHD4CZ7C02IRR1500 FF, RHD4CZ7C02IRR1504 FF, RHD4CZ6A015PT3202 FF, RHD4CZ6C052PT3202 FF, RHD4CZ5RA07PT3202 FF, RHD4CZ5C061PT3202 FF, RHD4CZ5L016PT3202 FF, RHD4CZ5A014PT3202 FF, RHD4CZ5L07PT3202 FF, RHD4CZ4A013PT3202 FF, RHD4CZ4L014PT3202 FF, RHD4CZ8A011PT3202 FF, RHD4CZ9C071PT3202 FF, RHD4CZ2L102PT3202 FF, RHD4CZ2C082PT3202 FF, RHD4CZ7C032PT3202 FF, RHD4CZ7L03PT3202 FF, RHD4CZ7L015PT3202 FF, RHD4CZ7C02PT3202 FF, RHD4CZ3C011PT3202 FF, RHD4CZ3L122PT3202 FF, RHD4CZ6A015PT4400 FF, RHD4CZ6C052PT4400 FF, RHD4CZ5L08PT4400 FF, RHD4CZ5L016PT4400 FF, RHD4CZ5A014PT4400 FF, RHD4CZ5L07PT4400 FF, RHD4CZ4A013PT4400 FF, RHD4CZ4C031PT4400 FF, RHD4CZ4L014PT4400 FF, RHD4CZ4L09PT4400 FF, RHD4CZ8A011PT4400 FF, RHD4CZ4L01PT4400 FF, RHD4CZ8L04PT4400 FF, RHD4CZ9C071PT4400 FF, RHD4CZ9L05PT4400 FF, RHD4CZ9L06PT4400 FF, RHD4CZ9L02PT4400 FF, RHD4CZ2L102PT4400 FF, RHD4CZ2L011PT4400 FF, RHD4CZ2C082PT4400 FF, RHD4CZ7C032PT4400 FF, RHD4CZ7L03PT4400 FF, RHD4CZ7L131PT4400 FF, RHD4CZ7L015PT4400 FF, RHD4CZ7A012PT4400 FF, RHD4CZ1C081PT4400 FF, RHD4CZ3C011PT4400 FF, RHD4CZ3L122PT4400 FF, RHD4CZ3C083PT4400 FF, RHD4CZ6A015IRR3200 FF, RHD4CZ6C052PT3200 FF, RHD4CZ6C052IRR3200 FF, RHD4CZ5RA07PT3200 FF, RHD4CZ5C061PT3200 FF, RHD4CZ5L08PT3200 FF, RHD4CZ5L08IRR3200 FF, RHD4CZ5L016PT3200 FF, RHD4CZ5L07PT3200 FF, RHD4CZ5L07IRR3200 FF, RHD4CZ4L014PT3200 FF, RHD4CZ4L014IRR3200 FF, RHD4CZ4L09PT3200 FF, RHD4CZ4L09IRR3200 FF, RHD4CZ4L01PT3200 FF, RHD4CZ8L04PT3200 FF, RHD4CZ8L04IRR3200 FF, RHD4CZ9C071PT3200 FF, RHD4CZ9L05PT3200 FF, RHD4CZ9L06PT3200 FF, RHD4CZ9L06IRR3200 FF, RHD4CZ9L02PT3200 FF, RHD4CZ9L02IRR3200 FF, RHD4CZ2L102PT3200 FF, RHD4CZ2L102IRR3200 FF, RHD4CZ2L011PT3200 FF, RHD4CZ2C082PT3200 FF, RHD4CZ2C082IRR3200 FF, RHD4CZ7L03IRR3200 FF, RHD4CZ7L131PT3200 FF, RHD4CZ7L131IRR3200 FF, RHD4CZ7L015PT3200 FF, RHD4CZ7L015IRR3200 FF, RHD4CZ7C02PT3200 FF, RHD4CZ7C02IRR3200 FF, RHD4CZ1C081PT3200 FF, RHD4CZ5L08PT3203 FF, RHD4CZ5A014PT3203 FF, RHD4CZ5L07PT3203 FF, RHD4CZ4A013PT3203 FF, RHD4CZ4L014PT3203 FF, RHD4CZ4L09PT3203 FF, RHD4CZ9C071PT3203 FF, RHD4CZ9L05PT3203 FF, RHD4CZ9L06PT3203 FF, RHD4CZ9L02PT3203 FF, RHD4CZ2L102PT3203 FF, RHD4CZ2L011PT3203 FF, RHD4CZ2C082PT3203 FF, RHD4CZ7L131PT3203 FF, RHD4CZ7C02PT3203 FF, RHD4CZ1C081PT3203 FF, RHD4CZ3C011PT3203 FF, RHD4CZ3L122PT3203 FF, RHD4CZ3C083PT3203 FF, RHD4CZ6A015IRR3203 FF, RHD4CZ5RA07IRR3202 FF, RHD4CZ5L07PT3201 FF, RHD4CZ5L07IRR3202 FF, RHD4CZ4A013PT3201 FF, RHD4CZ4C031PT3201 FF, RHD4CZ4L09IRR3202 FF, RHD4CZ8A011PT3201 FF, RHD4CZ9L02IRR3202 FF, RHD4CZ9L02IRR3203 FF, RHD4CZ7L03IRR3201 FF, RHD4CZ7L03IRR3203 FF, RHD4CZ7L131IRR3203 FF, RHD4CZ7L015IRR3202 FF, RHD4CZ7A012PT3201 FF, RHD4CZ7C02IRR3201 FF, RHD4CZ3C011PT3201 FF, RHD4CZ6C062SW3400 FF, RHD4CZ6C052SW3400 FF, RHD4CZ5RA07SW3400 FF, RHD4CZ5C061SW3400 FF, RHD4CZ5C061SW3401 FF, RHD4CZ5L08SW3400 FF, RHD4CZ5L016SW3400 FF, RHD4CZ5L07SW3400 FF, RHD4CZ4L09SW3400 FF, RHD4CZ9L06SW3400 FF, RHD4CZ9L02SW3400 FF, RHD4CZ2L102SW3400 FF, RHD4CZ7L03SW3400 FF, RHD4CZ7L015SW3400 FF, RHD4CZ1L101SW3400 FF, RHD4CZ1C081SW3400 FF, RHD4CZ6C062SW3500 FF, RHD4CZ6C052SW3500 FF, RHD4CZ5RA07SW3500 FF, RHD4CZ5C061SW3500 FF, RHD4CZ5C061SW3501 FF, RHD4CZ5L08SW3500 FF, RHD4CZ5L016SW3500 FF, RHD4CZ5L07SW3500 FF, RHD4CZ4L09SW3500 FF, RHD4CZ9L06SW3500 FF, RHD4CZ9L02SW3500 FF, RHD4CZ2L102SW3500 FF, RHD4CZ7L03SW3500 FF, RHD4CZ7L015SW3500 FF, RHD4CZ1L101SW3500 FF, RHD4CZ1C081SW3500 FF, RHD4CZ7L03ST7500 FF, RHD4CZ7L03ST3502 FF, RHD4CZ7L03PT4500 FF, RHD4CZ1L101IRR3201 FF, RHD4CZ8L04ST3500 FF, RHD4CZ4C012IRR3201 FF, RHD4CZ6A015RW3000 FF, RHD4CZ5L016ST8500 FF, RHD4CZ5A014IRR3203 FF, RHD4CZ1C081TC3400 FF, RHD4CZ3L122ST1507 FF, RHD4CZ7L03SL2400 FF, RHD4CZ7C013IRR3203 FF, RHD4CZ7C013IRR3200 FF, RHD4CZ6C052PT3203 FF, RHD4CZ7C032SL2400 FF, RHD4CZ7C02LV2400 FF, RHD4CZ9L06SL2400 FF, RHD4CZ6C052IRR3202 FF, RHD4CZ9C071ST1502 FF, RHD4CZ9C071ST1501 FF, RHD4CZ9C071ST1500 FF, RHD4CZ5L08SL2400 FF, RHD4CZ5L08SW3000 FF, RHD4CZ5L08SW2500 FF, RHD4CZ5L08PT1501 FF, RHD4CZ4A013LV2400 FF, RHD4CZ1C081IRR3203 FF, RHD4CZ4L09PT3202 FF, RHD4CZ2C082PT2401 FF, RHD4CZ4L09PT2401 FF, RHD4CZ4A013ST2500 FF, RHD4CZ5C061SL2400 FF, RHD4CZ4L014IRR3203 FF, RHD4CZ5L08IRR3202 FF, RHD4CZ4A013ICT3400 FF, RHD4CZ9L02SW2500 FF, RHD4CZ9L05SL2400 FF, RHD4CZ5L016IRR3203 FF, RHD4CZ5L016IRR3201 FF, RHD4CZ4RA02CCTV1500 FF, RHD4CZ4C012IRR1504 FF, RHD4CZ9L02IRR2401 FF, RHD4CZ8C014IRR3200 FF, RHD4CZ8C014IRR1501 FF, RHD4CZ8A011IRR3200 FF, RHD4CZ8C014IRR3202 FF, RHD4CZ9C071SW3500 FF, RHD4CZ7C032IRR3202 FF, RHD4CZ9C071IRR3201 FF, RHD4CZ7A012SW3500 FF, RHD4CZ8L04LV2400 FF, RHD4CZ7C032IRR3203 FF, RHD4CZ8RA04SL2400 FF, RHD4CZ7C032IRR3200 FF, RHD4CZ8L04SL2400 FF, RHD4CZ3C011IRR3200 FF, RHD4CZ4L01CCTV1500 FF, RHD4CZ4L01RD8100 FF, RHD4CZ3L122SL2400 FF, RHD4CZ4L01CCTV6100 FF, RHD4CZ9B36EX1000 FF, RHD4CZ9C071SL2400 FF, RHD4CZ5C061ST3401 FF, RHD4CZ1C081ST3500 FF, RHD4CZ1C081ST3501 FF, RHD4CZ1L101ST3500 FF, RHD4CZ1L101ST3501 FF, RHD4CZ2C082ST3500 FF, RHD4CZ2C082ST3501 FF, RHD4CZ2L011ST3500 FF, RHD4CZ2L102ST3500 FF, RHD4CZ2L102ST3501 FF, RHD4CZ2L102ST3502 FF, RHD4CZ3C083ST3500 FF, RHD4CZ3L122ST3500 FF, RHD4CZ3L122ST3501 FF, RHD4CZ3L122ST3502 FF, RHD4CZ4A013ST3501 FF, RHD4CZ4A013ST3502 FF, RHD4CZ4C031ST3500 FF, RHD4CZ4C031ST3501 FF, RHD4CZ4L014ST3500 FF, RHD4CZ4L014ST3501 FF, RHD4CZ4L014ST3502 FF, RHD4CZ4L09ST3500 FF, RHD4CZ4L09ST3501 FF, RHD4CZ5A014ST3500 FF, RHD4CZ5A014ST3501 FF, RHD4CZ5A014ST3502 FF, RHD4CZ5C051ST3500 FF, RHD4CZ5C051ST3501 FF, RHD4CZ5C061ST3501 FF, RHD4CZ5L016ST3500 FF, RHD4CZ5L016ST3501 FF, RHD4CZ5L016ST3502 FF, RHD4CZ5L07ST3500 FF, RHD4CZ5L07ST3501 FF, RHD4CZ5L07ST3502 FF, RHD4CZ5L08ST3500 FF, RHD4CZ5L08ST3502 FF, RHD4CZ6A015ST3500 FF, RHD4CZ6A015ST3501 FF, RHD4CZ6A02ST3500 FF, RHD4CZ6C052ST3500 FF, RHD4CZ6C052ST3501 FF, RHD4CZ6C062ST3500 FF, RHD4CZ6C062ST3501 FF, RHD4CZ7C02ST3500 FF, RHD4CZ7C02ST3501 FF, RHD4CZ7C02ST3502 FF, RHD4CZ7L015ST3500 FF, RHD4CZ7L015ST3501 FF, RHD4CZ7L131ST3501 FF, RHD4CZ8A011ST3500 FF, RHD4CZ8A011ST3501 FF, RHD4CZ8L04ST3501 FF, RHD4CZ8L04ST3502 FF, RHD4CZ9C071ST3500 FF, RHD4CZ9C071ST3501 FF, RHD4CZ9C071ST3502 FF, RHD4CZ9L02ST3500 FF, RHD4CZ9L02ST3501 FF, RHD4CZ9L02ST3502 FF, RHD4CZ9L05ST3500 FF, RHD4CZ9L06ST3500 FF, RHD4CZ9L06ST3501 FF, RHD4CZ9L06ST3502 FF, RHD4CZ1C081ST7500 FF, RHD4CZ1L101ST7500 FF, RHD4CZ2C082ST7500 FF, RHD4CZ2L011ST7500 FF, RHD4CZ2L102ST7500 FF, RHD4CZ3C083ST7500 FF, RHD4CZ3L122ST7500 FF, RHD4CZ4A013ST7500 FF, RHD4CZ4C031ST7500 FF, RHD4CZ4L014ST7500 FF, RHD4CZ4L09ST7500 FF, RHD4CZ5A014ST7500 FF, RHD4CZ5C051ST7500 FF, RHD4CZ5C061ST7500 FF, RHD4CZ5L016ST7500 FF, RHD4CZ5L07ST7500 FF, RHD4CZ5L08ST7500 FF, RHD4CZ6A015ST7500 FF, RHD4CZ6A02ST7500 FF, RHD4CZ6C052ST7500 FF, RHD4CZ6C062ST7500 FF, RHD4CZ7A012ST7500 FF, RHD4CZ7C02ST7500 FF, RHD4CZ7L015ST7500 FF, RHD4CZ7L03ST7500, RHD4CZ7L131ST7500 FF, RHD4CZ8A011ST7500 FF, RHD4CZ8L04ST7500 FF, RHD4CZ9C071ST7500 FF, RHD4CZ9L02ST7500 FF, RHD4CZ9L05ST7500 FF, RHD4CZ9L06ST7500 FF, RHD4CZ1C081ST8500 FF, RHD4CZ2C082ST8500 FF, RHD4CZ2L102ST8500 FF, RHD4CZ3L122ST8500 FF, RHD4CZ4A013ST8500 FF, RHD4CZ4L014ST8500 FF, RHD4CZ5A014ST8500 FF, RHD4CZ5L07ST8500 FF, RHD4CZ6C052ST8500 FF, RHD4CZ6C062ST8500 FF, RHD4CZ7A012ST8500 FF, RHD4CZ7C02ST8500 FF, RHD4CZ7L015PT4500 FF, RHD4CZ6C052PT4500 FF, RHD4CZ5A014PT4500 FF, RHD4CZ5C051IRR3202 FF, RHD4CZ5C051IRR3203 FF, RHD4CZ5C051IRR3202, RHD4CZ5L016PT4500 FF, RHD4CZ5L08PT4500 FF, RHD4CZ5RA07IRR3200 FF, RHD4CZ5L07PT4500 FF, RHD4CZ5C051PT3200 FF, RHD4CZ5C051IRR3200 FF, RHD4CZ8A011PT4500 FF, RHD4CZ4L01PT4500 FF, RHD4CZ8L04PT4500 FF, RHD4CZ9C071PT4500 FF, RHD4CZ9L05PT4500 FF, RHD4CZ9L06PT4500 FF, RHD4CZ7A012PT4500 FF, RHD4CZ4C031PT4500 FF, RHD4CZ4L014PT4500 FF, RHD4CZ4L09PT4500 FF, RHD4CZ3L122PT4500 FF, RHD4CZ1C081PT4500 FF, RHD4CZ2C082PT4500 FF, RHD4CZ2L102PT4500 FF, RHD4CZ2L011PT4500 FF, RHD4CZ5L08ST4600 FF, RHD4CZ2L102ST4600 FF, RHD4CZ9L05SW3500 FF, RHD4PRSHLDOSIRR1300 FF, RHD4PRSHLSTAGIRR1300 FF, RHD4PRSHLDOSIRR1100 FF, RHD4PRSHLSTAGIRR1100 FF, RHD4PRSHLDOSIRR1200 FF, RHD4PRSHLDOSIRR1400 FF, RHD4PRSHLSTAGIRR1200 FF, RHD4PRSHLSTAGIRR1400 FF, RHD4ENSDZ9APPIRR140 FF, RHD4CZ9L06IRR1100 FF, RHD4PRSHLDOSSW1408 FF, RHD4PRSHLSTAGSW1408 FF, RHD4PRSHLDOSSW1308 FF, RHD4PRSHLSTAGSW1308 FF, RHD4CZ9L06SW3501 FF, RHD4CZ5A014SW3500 FF, RHD4CZ5A014IRR3200 FF |  | 188.98d |
| RHD4GN24MMIS1700 |  | All Network Finish Milestone - MIS | 0d | 2028-06-29 | 2028-06-29 | RHD4CZ6C062MV1200 FF, RHD4CZ6C052MV1200 FF, RHD4CZ5C051MV1200 FF, RHD4CZ5RA07MV1200 FF, RHD4CZ5C061MV1200 FF, RHD4CZ5L08MV1200 FF, RHD4CZ5L016MV1200 FF, RHD4CZ5A014MV1200 FF, RHD4CZ5L07MV1200 FF, RHD4CZ4A013MV1200 FF, RHD4CZ4C031MV1200 FF, RHD4CZ4L014MV1200 FF, RHD4CZ4L09MV1200 FF, RHD4CZ4C012MV1200 FF, RHD4CZ8A011MV1200 FF, RHD4CZ4L01MV1200 FF, RHD4CZ8L04MV1200 FF, RHD4CZ8C014MV1200 FF, RHD4CZ9C071MV1200 FF, RHD4CZ9L06MV1200 FF, RHD4CZ9L02MV1200 FF, RHD4CZ2L102MV1200 FF, RHD4CZ2L011MV1200 FF, RHD4CZ7C032MV1200 FF, RHD4CZ7L03MV1200 FF, RHD4CZ7L131MV1200 FF, RHD4CZ7C013MV1200 FF, RHD4CZ7L015MV1200 FF, RHD4CZ7A012MV1200 FF, RHD4CZ7C02MV1200 FF, RHD4CZ1L101MV1200 FF, RHD4CZ1C081MV1200 FF, RHD4CZ3C011MV1200 FF, RHD4CZ3L122MV1200 FF, RHD4CZ6C062MV3300 FF, RHD4CZ6C062LV3300 FF, RHD4CZ6C062LV3400 FF, RHD4CZ6C062SL3300 FF, RHD4CZ6C062SL3400 FF, RHD4CZ6A015LV3300 FF, RHD4CZ6A015LV3400 FF, RHD4CZ6A015SL3300 FF, RHD4CZ6A015SL3400 FF, RHD4CZ6C052MV3300 FF, RHD4CZ6C052LV3300 FF, RHD4CZ6C052LV3400 FF, RHD4CZ6C052SL3300 FF, RHD4CZ6C052SL3400 FF, RHD4CZ6A02LV3300 FF, RHD4CZ6A02LV3400 FF, RHD4CZ6A02SL3300 FF, RHD4CZ6A02SL3400 FF, RHD4CZ6RA01SL3300 FF, RHD4CZ6RA01SL3400 FF, RHD4CZ5C051MV3300 FF, RHD4CZ5C051LV3300 FF, RHD4CZ5C051LV3400 FF, RHD4CZ5C051SL3300 FF, RHD4CZ5C051SL3400 FF, RHD4CZ5RA07MV3300 FF, RHD4CZ5RA07MV3301 FF, RHD4CZ5RA07LV3300 FF, RHD4CZ5RA07LV3400 FF, RHD4CZ5RA07SL3300 FF, RHD4CZ5RA07SL3400 FF, RHD4CZ5C061MV3300 FF, RHD4CZ5C061MV3301 FF, RHD4CZ5C061LV3300 FF, RHD4CZ5C061LV3400 FF, RHD4CZ5C061SL3300 FF, RHD4CZ5C061SL3400 FF, RHD4CZ5L08MV3300 FF, RHD4CZ5L08LV3300 FF, RHD4CZ5L08LV3400 FF, RHD4CZ5L08SL3300 FF, RHD4CZ5L08SL3400 FF, RHD4CZ5L016MV3300 FF, RHD4CZ5L016LV3300 FF, RHD4CZ5L016LV3400 FF, RHD4CZ5L016SL3300 FF, RHD4CZ5L016SL3400 FF, RHD4CZ5A014MV3300 FF, RHD4CZ5A014SL3300 FF, RHD4CZ5A014SL3400 FF, RHD4CZ5L07MV3300 FF, RHD4CZ5L07LV3300 FF, RHD4CZ5L07LV3400 FF, RHD4CZ5L07SL3300 FF, RHD4CZ5L07SL3400 FF, RHD4CZ4A013MV3300 FF, RHD4CZ4A013SL3300 FF, RHD4CZ4A013SL3400 FF, RHD4CZ4RA02SL3300 FF, RHD4CZ4RA02SL3400 FF, RHD4CZ4C031MV3300 FF, RHD4CZ4C031LV3300 FF, RHD4CZ4C031LV3400 FF, RHD4CZ4C031SL3300 FF, RHD4CZ4C031SL3400 FF, RHD4CZ4L014MV3300 FF, RHD4CZ4L014MV3301 FF, RHD4CZ4L014LV3300 FF, RHD4CZ4L014LV3400 FF, RHD4CZ4L014SL3300 FF, RHD4CZ4L014SL3400 FF, RHD4CZ4L09MV3300 FF, RHD4CZ4L09MV3301 FF, RHD4CZ4L09LV3300 FF, RHD4CZ4L09LV3400 FF, RHD4CZ4L09SL3300 FF, RHD4CZ4L09SL3400 FF, RHD4CZ4C012MV3300 FF, RHD4CZ4C012LV3300 FF, RHD4CZ4C012LV3400 FF, RHD4CZ4C012SL3300 FF, RHD4CZ4C012SL3400 FF, RHD4CZ8A011MV3300 FF, RHD4CZ8A011MV3301 FF, RHD4CZ8A011LV3300 FF, RHD4CZ8A011LV3400 FF, RHD4CZ8A011SL3300 FF, RHD4CZ8A011SL3400 FF, RHD4CZ8RA04MV3301 FF, RHD4CZ8RA04LV3300 FF, RHD4CZ8RA04LV3400 FF, RHD4CZ8RA04SL3300 FF, RHD4CZ8RA04SL3400 FF, RHD4CZ4L01MV3300 FF, RHD4CZ4L01LV3300 FF, RHD4CZ4L01LV3400 FF, RHD4CZ4L01SL3300 FF, RHD4CZ4L01SL3400 FF, RHD4CZ8L04MV3300 FF, RHD4CZ8L04SL3300 FF, RHD4CZ8L04SL3400 FF, RHD4CZ8C014MV3300 FF, RHD4CZ8C014MV3301 FF, RHD4CZ8C014LV3300 FF, RHD4CZ8C014LV3400 FF, RHD4CZ8C014SL3300 FF, RHD4CZ8C014SL3400 FF, RHD4CZ9C071MV3300 FF, RHD4CZ9C071LV3300 FF, RHD4CZ9C071LV3400 FF, RHD4CZ9C071SL3300 FF, RHD4CZ9C071SL3400 FF, RHD4CZ9L05MV3300 FF, RHD4CZ9L05LV3300 FF, RHD4CZ9L05LV3400 FF, RHD4CZ9L05SL3300 FF, RHD4CZ9L05SL3400 FF, RHD4CZ9L06MV3300 FF, RHD4CZ9L06LV3300 FF, RHD4CZ9L06LV3400 FF, RHD4CZ9L06SL3300 FF, RHD4CZ9L06SL3400 FF, RHD4CZ9L02MV3300 FF, RHD4CZ9L02MV3301 FF, RHD4CZ9L02LV3300 FF, RHD4CZ9L02LV3400 FF, RHD4CZ9L02SL3300 FF, RHD4CZ9L02SL3400 FF, RHD4CZ2L102MV3300 FF, RHD4CZ2L102SL3300 FF, RHD4CZ2L102SL3400 FF, RHD4CZ2L011MV3300 FF, RHD4CZ2L011LV3300 FF, RHD4CZ2L011LV3400 FF, RHD4CZ2L011SL3300 FF, RHD4CZ2L011SL3400 FF, RHD4CZ2C082SL3300 FF, RHD4CZ2C082SL3400 FF, RHD4CZ7C032MV3300 FF, RHD4CZ7C032LV3300 FF, RHD4CZ7C032LV3400 FF, RHD4CZ7C032SL3300 FF, RHD4CZ7C032SL3400 FF, RHD4CZ7L03MV3300 FF, RHD4CZ7L03MV3301 FF, RHD4CZ7L03LV3300 FF, RHD4CZ7L03LV3400 FF, RHD4CZ7L03SL3300 FF, RHD4CZ7L03SL3400 FF, RHD4CZ7L131MV3300 FF, RHD4CZ7L131LV3300 FF, RHD4CZ7L131LV3400 FF, RHD4CZ7L131SL3300 FF, RHD4CZ7L131SL3400 FF, RHD4CZ7C013MV3300 FF, RHD4CZ7C013SL3300 FF, RHD4CZ7C013SL3400 FF, RHD4CZ7L015MV3300 FF, RHD4CZ7L015SL3300 FF, RHD4CZ7L015SL3400 FF, RHD4CZ7A012MV3300 FF, RHD4CZ7A012LV3300 FF, RHD4CZ7A012LV3400 FF, RHD4CZ7A012SL3300 FF, RHD4CZ7A012SL3400 FF, RHD4CZ7C02MV3300 FF, RHD4CZ7C02LV3300 FF, RHD4CZ7C02LV3400 FF, RHD4CZ7C02SL3300 FF, RHD4CZ7C02SL3400 FF, RHD4CZ7RA03MV3301 FF, RHD4CZ7RA03LV3300 FF, RHD4CZ7RA03LV3400 FF, RHD4CZ7RA03SL3300 FF, RHD4CZ7RA03SL3400 FF, RHD4CZ7RA05SL3300 FF, RHD4CZ7RA05SL3400 FF, RHD4CZ1L101MV3300 FF, RHD4CZ1L101LV3300 FF, RHD4CZ1L101LV3400 FF, RHD4CZ1L101SL3300 FF, RHD4CZ1L101SL3400 FF, RHD4CZ1C081MV3300 FF, RHD4CZ1C081LV3300 FF, RHD4CZ1C081LV3400 FF, RHD4CZ1C081SL3300 FF, RHD4CZ1C081SL3400 FF, RHD4CZ3C011MV3300 FF, RHD4CZ3C011MV3301 FF, RHD4CZ3C011LV3300 FF, RHD4CZ3C011LV3400 FF, RHD4CZ3C011SL3300 FF, RHD4CZ3C011SL3400 FF, RHD4CZ3L122MV3300 FF, RHD4CZ3L122MV3301 FF, RHD4CZ3L122LV3300 FF, RHD4CZ3L122LV3400 FF, RHD4CZ3L122SL3300 FF, RHD4CZ3L122SL3400 FF, RHD4CZ3C083LV3300 FF, RHD4CZ3C083LV3400 FF, RHD4CZ3C083SL3300 FF, RHD4CZ3C083SL3400 FF, RHD4CZ6C062SL6100 FF, RHD4CZ6A015SL6100 FF, RHD4CZ6C052SL6100 FF, RHD4CZ6A02SL6100 FF, RHD4CZ5C051SL6100 FF, RHD4CZ5RA07SL6100 FF, RHD4CZ5C061SL6100 FF, RHD4CZ5L016SL6100 FF, RHD4CZ5A014SL6100 FF, RHD4CZ5L07SL6100 FF, RHD4CZ4A013SL6100 FF, RHD4CZ4C031SL6100 FF, RHD4CZ4L014SL6100 FF, RHD4CZ4L09SL6100 FF, RHD4CZ8A011SL6100 FF, RHD4CZ8L04SL6100 FF, RHD4CZ8C014SL6100 FF, RHD4CZ9C071SL6100 FF, RHD4CZ9L05SL6100 FF, RHD4CZ9L06SL6100 FF, RHD4CZ9L02SL6100 FF, RHD4CZ2L102SL6100 FF, RHD4CZ2C082SL6100 FF, RHD4CZ7C032SL6100 FF, RHD4CZ7L03SL6100 FF, RHD4CZ7C013SL6100 FF, RHD4CZ7L015SL6100 FF, RHD4CZ7C02SL6100 FF, RHD4CZ7RA03SL6100 FF, RHD4CZ7RA05SL6100 FF, RHD4CZ1L101SL6100 FF, RHD4CZ1C081SL6100 FF, RHD4CZ3C011SL6100 FF, RHD4CZ3C083SL6100 FF, RHD4CZ6C062TC2400 FF, RHD4CZ6C062ICT2400 FF, RHD4CZ6A015TC2400 FF, RHD4CZ6A015ICT2400 FF, RHD4CZ6C052TC2400 FF, RHD4CZ6C052ICT2400 FF, RHD4CZ6A02TC2400 FF, RHD4CZ6A02ICT2400 FF, RHD4CZ6RA01TC2400 FF, RHD4CZ5C051TC2400 FF, RHD4CZ5C051ICT2400 FF, RHD4CZ5RA07TC2400 FF, RHD4CZ5RA07ICT2400 FF, RHD4CZ5C061TC2400 FF, RHD4CZ5C061ICT2400 FF, RHD4CZ5L08TC2400 FF, RHD4CZ5L08ICT2400 FF, RHD4CZ5L016TC2400 FF, RHD4CZ5L016ICT2400 FF, RHD4CZ5A014TC2400 FF, RHD4CZ5A014ICT2400 FF, RHD4CZ5L07TC2400 FF, RHD4CZ5L07ICT2400 FF, RHD4CZ4A013TC2400 FF, RHD4CZ4A013ICT2400 FF, RHD4CZ4C031TC2400 FF, RHD4CZ4C031ICT2400 FF, RHD4CZ4L014TC2400 FF, RHD4CZ4L014ICT2400 FF, RHD4CZ4L09TC2400 FF, RHD4CZ4L09ICT2400 FF, RHD4CZ4C012TC2400 FF, RHD4CZ4C012ICT2400 FF, RHD4CZ8A011TC2400 FF, RHD4CZ8A011ICT2400 FF, RHD4CZ8RA04ICT2400 FF, RHD4CZ4L01TC2400 FF, RHD4CZ4L01ICT2400 FF, RHD4CZ8L04TC2400 FF, RHD4CZ8L04ICT2400 FF, RHD4CZ8C014TC2400 FF, RHD4CZ8C014ICT2400 FF, RHD4CZ9C071TC2400 FF, RHD4CZ9C071ICT2400 FF, RHD4CZ9L05TC2400 FF, RHD4CZ9L05ICT2400 FF, RHD4CZ9L06TC2400 FF, RHD4CZ9L06ICT2400 FF, RHD4CZ9L02TC2400 FF, RHD4CZ9L02ICT2400 FF, RHD4CZ2L102TC2400 FF, RHD4CZ2L102ICT2400 FF, RHD4CZ2L011TC2400 FF, RHD4CZ2L011ICT2400 FF, RHD4CZ2C082TC2400 FF, RHD4CZ2C082ICT2400 FF, RHD4CZ7C032TC2400 FF, RHD4CZ7C032ICT2400 FF, RHD4CZ7L03TC2400 FF, RHD4CZ7L03ICT2400 FF, RHD4CZ7L131TC2400 FF, RHD4CZ7L131ICT2400 FF, RHD4CZ7C013TC2400 FF, RHD4CZ7C013ICT2400 FF, RHD4CZ7L015TC2400 FF, RHD4CZ7L015ICT2400 FF, RHD4CZ7A012TC2400 FF, RHD4CZ7A012ICT2400 FF, RHD4CZ7C02TC2400 FF, RHD4CZ7C02ICT2400 FF, RHD4CZ7RA03ICT2400 FF, RHD4CZ7RA05ICT2400 FF, RHD4CZ1L101TC2400 FF, RHD4CZ1L101ICT2400 FF, RHD4CZ1C081TC2400 FF, RHD4CZ1C081ICT2400 FF, RHD4CZ3C011ICT2400 FF, RHD4CZ3L122TC2400 FF, RHD4CZ3L122ICT2400 FF, RHD4CZ3C083TC2400 FF, RHD4CZ3C083ICT2400 FF, RHD4CZ6C062SL1500 FF, RHD4CZ6A015SL1500 FF, RHD4CZ6C052SL1500 FF, RHD4CZ6A02SL1500 FF, RHD4CZ6RA01SL1500 FF, RHD4CZ5C051SL1500 FF, RHD4CZ5RA07SL1500 FF, RHD4CZ5C061SL1500 FF, RHD4CZ5L08SL1500 FF, RHD4CZ5L016SL1500 FF, RHD4CZ5A014SL1500 FF, RHD4CZ5L07SL1500 FF, RHD4CZ4A013SL1500 FF, RHD4CZ4RA02SL1500 FF, RHD4CZ4C031SL1500 FF, RHD4CZ4L014SL1500 FF, RHD4CZ4L09SL1500 FF, RHD4CZ4C012SL1500 FF, RHD4CZ8A011SL1500 FF, RHD4CZ8RA04SL1500 FF, RHD4CZ4L01SL1500 FF, RHD4CZ8L04SL1500 FF, RHD4CZ8C014SL1500 FF, RHD4CZ9C071SL1500 FF, RHD4CZ9L05SL1500 FF, RHD4CZ9L06SL1500 FF, RHD4CZ9L02SL1500 FF, RHD4CZ2L102SL1500 FF, RHD4CZ2L011SL1500 FF, RHD4CZ2C082SL1500 FF, RHD4CZ7C032SL1500 FF, RHD4CZ7L03SL1500 FF, RHD4CZ7L131SL1500 FF, RHD4CZ7C013SL1500 FF, RHD4CZ7L015SL1500 FF, RHD4CZ7A012SL1500 FF, RHD4CZ7C02SL1500 FF, RHD4CZ7RA03SL1500 FF, RHD4CZ7RA05SL1500 FF, RHD4CZ1L101SL1500 FF, RHD4CZ1C081SL1500 FF, RHD4CZ3C011SL1500 FF, RHD4CZ3C083SL1500 FF, RHD4CZ6A015CCTV1400 FF, RHD4CZ6A015CCTV6100 FF, RHD4CZ6A02CCTV1400 FF, RHD4CZ6A02CCTV6100 FF, RHD4CZ6RA01CCTV1400 FF, RHD4CZ6RA01CCTV1500 FF, RHD4CZ6RA01CCTV6100 FF, RHD4CZ5RA07CCTV1400 FF, RHD4CZ5RA07CCTV1500 FF, RHD4CZ5RA07CCTV6100 FF, RHD4CZ5C061CCTV1400 FF, RHD4CZ5C061CCTV1500 FF, RHD4CZ5C061CCTV6100 FF, RHD4CZ5L016CCTV1400 FF, RHD4CZ5L016CCTV1500 FF, RHD4CZ5L016CCTV6100 FF, RHD4CZ5L07CCTV1400 FF, RHD4CZ5L07CCTV1500 FF, RHD4CZ5L07CCTV6100 FF, RHD4CZ4C031CCTV1400 FF, RHD4CZ4C031CCTV1500 FF, RHD4CZ4C031CCTV6100 FF, RHD4CZ4L014CCTV1400 FF, RHD4CZ4L014CCTV1500 FF, RHD4CZ4L014CCTV6100 FF, RHD4CZ8A011CCTV1400 FF, RHD4CZ8A011CCTV1500 FF, RHD4CZ8A011CCTV6100 FF, RHD4CZ8RA04CCTV1400 FF, RHD4CZ8RA04CCTV1500 FF, RHD4CZ8RA04CCTV6100 FF, RHD4CZ8L04CCTV1400 FF, RHD4CZ8L04CCTV1500 FF, RHD4CZ8L04CCTV6100 FF, RHD4CZ9L02CCTV1400 FF, RHD4CZ9L02CCTV1500 FF, RHD4CZ9L02CCTV6100 FF, RHD4CZ2L102CCTV1400 FF, RHD4CZ2L102CCTV1500 FF, RHD4CZ2L102CCTV6100 FF, RHD4CZ2C082CCTV1400 FF, RHD4CZ2C082CCTV1500 FF, RHD4CZ2C082CCTV6100 FF, RHD4CZ7C032CCTV1400 FF, RHD4CZ7C032CCTV1500 FF, RHD4CZ7C032CCTV6100 FF, RHD4CZ7L03CCTV1400 FF, RHD4CZ7L03CCTV1500 FF, RHD4CZ7L03CCTV6100 FF, RHD4CZ7C02CCTV1400 FF, RHD4CZ7C02CCTV6100 FF, RHD4CZ7RA03CCTV1400 FF, RHD4CZ7RA03CCTV1500 FF, RHD4CZ7RA03CCTV6100 FF, RHD4CZ1L101CCTV1400 FF, RHD4CZ1L101CCTV1500 FF, RHD4CZ1L101CCTV6100 FF, RHD4CZ1C081CCTV1400 FF, RHD4CZ1C081CCTV1500 FF, RHD4CZ1C081CCTV6100 FF, RHD4CZ3C083CCTV1400 FF, RHD4CZ3C083CCTV1500 FF, RHD4CZ3C083CCTV6100 FF, RHD4CZ4RA02CCTV2100 FF, RHD4CZ7L131CCTV2100 FF, RHD4CZ7L015CCTV2100 FF, RHD4CZ7L015CCTV1500 FF, RHD4CZ6C062MV3400 FF, RHD4CZ6C062MV3401 FF, RHD4CZ6RA01CCTV5200 FF, RHD4CZ6C052MV3400 FF, RHD4CZ6C052MV3401 FF, RHD4CZ5C061MV3401 FF, RHD4CZ5C061MV3400 FF, RHD4CZ5L08MV3401 FF, RHD4CZ5L08MV4200 FF, RHD4CZ5L08MV3401, RHD4CZ5L08MV3400 FF, RHD4CZ5RA07MV3400 FF, RHD4CZ5RA07MV3401 FF, RHD4CZ5RA07MV5400 FF, RHD4CZ5C051CCTV2100 FF, RHD4CZ8C014MV5400 FF, RHD4CZ8C014MV3401 FF, RHD4CZ8C014MV3400 FF, RHD4CZ4L01CCTV2100 FF, RHD4CZ3C011CCTV2100 FF, RHD4PRSHLSTAGLS1000 FF, RHD4PRSHLPOSL1300, RHD4GNPPMAT1100 FF, RHD4ENMARSUBSL400 FF, RHD4GNPPSD1100 FF, RHD4ENSDZ9SUBCCTV210, RHD4CZ1L101RW3000 FF, RHD4CZ1C081RW3000 FF, RHD4CZ1C081DM2000 FF, RHD4CZ2L102RW3002 FF, RHD4CZ2L011RW3000 FF, RHD4CZ2C082RW3000 FF, RHD4CZ4A013RW3003 FF, RHD4CZ4C031RW3000 FF, RHD4CZ4L014RW3000 FF, RHD4CZ4C012RW3000 FF, RHD4CZ3L122MV2400 FF, RHD4CZ5A014CCTV1500 FF, RHD4CZ5L08RW3000 FF |  | -30d |
| RHD4GNPFMIS1800 |  | Project Finish - MIS | 0d | 2029-01-17 | 2029-01-17 | RHD4HOASZ4APPSW120, RHD4HOASZ4APPPT130, RHD4HOASZ4APPIRR140, RHD4HOASZ4APPMV150, RHD4HOASZ4APPLV160, RHD4HOASZ4APPSL170, RHD4HOASZ4APPTC190, RHD4HOASZ4APPICT200 FF, RHD4HOASZ4APPCCTV210, RHD4HOASZ4APPRD220, RHD4HOASZ5APPEW100, RHD4HOASZ5APPST110, RHD4HOASZ5APPSW120, RHD4HOASZ5APPPT130, RHD4HOASZ5APPIRR140, RHD4HOASZ5APPMV150, RHD4HOASZ5APPLV160, RHD4HOASZ5APPSL170, RHD4HOASZ5APPTC190, RHD4HOASZ5APPICT200 FF, RHD4HOASZ5APPCCTV210, RHD4HOASZ5APPRD220, RHD4HOASZ6APPEW100, RHD4HOASZ6APPST110, RHD4HOASZ6APPSW120, RHD4HOASZ6APPPT130, RHD4HOASZ6APPIRR140, RHD4HOASZ6APPMV150, RHD4HOASZ6APPLV160, RHD4HOASZ6APPSL170, RHD4HOASZ6APPTC190, RHD4HOASZ6APPICT200 FF, RHD4HOASZ6APPCCTV210, RHD4HOASZ6APPRD220, RHD4HOASZ7APPEW100, RHD4HOASZ7APPST110, RHD4HOASZ7APPSW120, RHD4HOASZ7APPPT130, RHD4HOASZ7APPIRR140, RHD4HOASZ7APPMV150, RHD4HOASZ7APPLV160, RHD4HOASZ7APPSL170, RHD4HOASZ7APPTC190, RHD4HOASZ7APPICT200 FF, RHD4HOASZ7APPCCTV210, RHD4HOASZ7APPRD220, RHD4HOASZ8APPEW100, RHD4HOASZ8APPST110, RHD4HOASZ8APPSW120, RHD4HOASZ8APPPT130, RHD4HOASZ8APPIRR140, RHD4HOASZ8APPMV150, RHD4HOASZ8APPLV160, RHD4HOASZ8APPSL170, RHD4HOASZ8APPTC190, RHD4HOASZ8APPICT200 FF, RHD4HOASZ8APPCCTV210, RHD4HOASZ8APPRD220, RHD4HOASZ9APPEW100, RHD4HOASZ9APPST110, RHD4HOASZ9APPSW120, RHD4HOASZ9APPPT130, RHD4HOASZ9APPIRR140, RHD4HOASZ9APPMV150, RHD4HOASZ9APPLV160, RHD4HOASZ9APPSL170, RHD4HOASZ9APPTC190, RHD4HOASZ9APPICT200 FF, RHD4HOASZ9APPCCTV210, RHD4HOASZ9APPRD220, RHD4HOASTUN1APP1000, RHD4HOASTUN1APP1100, RHD4HOASTUN1APP1200, RHD4HOASSWL1APP1000, RHD4HOASSWL1APP1100, RHD4HOASSWL1APP1200, RHD4HOASSWL1APP1300, RHD4HOASSTL1APP1000, RHD4HOASSTL1APP1100, RHD4HOASSTL1APP1200, RHD4HOASSTL1APP1300, RHD4GNHOOS1214, RHD4GNHOWG1215, RHD4GNHOFM1216, RHD4CZ6C062RD7100 FF, RHD4CZ6A015RD7100 FF, RHD4CZ6C052RD7100 FF, RHD4CZ5C051RD7100 FF, RHD4CZ5RA07RD7100 FF, RHD4CZ5C061RD7100 FF, RHD4CZ5L08RD7100 FF, RHD4CZ5L016RD7100 FF, RHD4CZ5A014RD7100 FF, RHD4CZ5L07RD7100 FF, RHD4CZ4A013RD7100 FF, RHD4CZ4RA02RD7100 FF, RHD4CZ4C031RD7100 FF, RHD4CZ4L014RD7100 FF, RHD4CZ4L09RD7100 FF, RHD4CZ4C012RD7100 FF, RHD4CZ8A011RD7100 FF, RHD4CZ8RA04RD7100 FF, RHD4CZ4L01RD7100 FF, RHD4CZ8L04RD7100 FF, RHD4CZ8C014RD7100 FF, RHD4CZ9C071RD7100 FF, RHD4CZ9L05RD7100 FF, RHD4CZ9L06RD7100 FF, RHD4CZ9L02RD7100 FF, RHD4CZ2L102RD7100 FF, RHD4CZ2L011RD7100 FF, RHD4CZ2C082RD7100 FF, RHD4CZ7C032RD7100 FF, RHD4CZ7L03RD7100 FF, RHD4CZ7L131RD7100 FF, RHD4CZ7C013RD7100 FF, RHD4CZ7L015RD7100 FF, RHD4CZ7A012RD7100 FF, RHD4CZ7C02RD7100 FF, RHD4CZ7RA03RD7100 FF, RHD4CZ1L101RD7100 FF, RHD4CZ1C081RD7100 FF, RHD4CZ3C011RD7100 FF, RHD4CZ3L122RD7100 FF, RHD4CZ3C083RD7100 FF, RHD4CZ3L122RD4100 FF, RHD4GNHOFM1217 FF, RHD4GNHODMOB1000 FF, RHD4GNHODMOB1100 FF, RHD4GNHODMOB1200 FF, RHD4GNHODMOB1300 FF, RHD4GNHODMOB1400 FF, RHD4GNHOOS1214 FF, RHD4GNHOWG1215 FF, RHD4CZ7RA05RD9100 FF, RHD4CZ7RA05RD7100 FF, RHD4GNMRDMIS1200 FF, RHD4GNMOBMIS1100 FF, RHD4GNENMIS1300 FF, RHD4GNPROMIS1400 FF, RHD4GN10MMIS1500 FF, RHD4GN18MMIS1600 FF, RHD4GN24MMIS1700 FF, RHD4CZ9L06ICT2400, RHD4CZ9L06TC2400, RHD4HOASZ6SUBTC190, RHD4PRSHLSTAGLS1000, RHD4PRSHLPOSL1300 SS, RHD4GNPPMAT1100, RHD4ENMARSUBSL400 SS, RHD4GNPPSD1100, RHD4ENSDZ9SUBCCTV210 SS, A1000, RHD4CZ8A011SW2500 FF, RHD4CZ8RA04RD8100 FF, RHD4CZ9L02IRR3201 FF, RHD4CZ7L03SW1500 FF, RHD4CZ7C02SW1500 FF, RHD4CZ7RA05RD8100 FF, RHD4HOASZ1APPEW100, RHD4HOASZ1APPST110, RHD4HOASZ1APPSW120, RHD4HOASZ1APPPT130, RHD4HOASZ1APPIRR140, RHD4HOASZ1APPMV150, RHD4HOASZ1APPLV160, RHD4HOASZ1APPSL170, RHD4HOASZ1APPTC190, RHD4HOASZ1APPICT200 FF, RHD4HOASZ1APPCCTV210, RHD4HOASZ1APPRD220, RHD4HOASZ2APPEW100, RHD4HOASZ2APPST110, RHD4HOASZ2APPSW120, RHD4HOASZ2APPPT130, RHD4HOASZ2APPIRR140, RHD4HOASZ2APPMV150, RHD4HOASZ2APPLV160, RHD4HOASZ2APPSL170, RHD4HOASZ2APPTC190, RHD4HOASZ2APPICT200 FF, RHD4HOASZ2APPCCTV210, RHD4HOASZ2APPRD220, RHD4HOASZ3APPEW100, RHD4HOASZ3APPST110, RHD4HOASZ3APPSW120, RHD4HOASZ3APPPT130, RHD4HOASZ3APPIRR140, RHD4HOASZ3APPMV150, RHD4HOASZ3APPLV160, RHD4HOASZ3APPSL170, RHD4HOASZ3APPTC190, RHD4HOASZ3APPICT200 FF, RHD4HOASZ3APPCCTV210, RHD4HOASZ3APPRD220, RHD4HOASZ4APPEW100, RHD4HOASZ4APPST110 |  | -232d |
|  | 9 | **RHD4-02-002-Preliminaries - PP** |  | 2025-11-30 | 2026-11-23 |  |  |  |
|  | 10 | **RHD4-02-002-Soil Investigation** |  | 2025-11-30 | 2025-12-13 |  |  |  |
| RHD4GNPPSoL1000 |  | Prepare & Submit Soil Investigation - PP | 6d | 2025-11-30 A | 2025-12-06 A | RHD4GNPSMIS1000 SS | 100% |  |
| RHD4GNPPSoL1100 |  | Review & approval Soil Investigation - PP | 6d | 2025-12-07 A | 2025-12-13 A | RHD4GNPPSoL1000 | 100% |  |
|  | 11 | **RHD4-02-002-Land Surveying Works** |  | 2025-11-30 | 2025-12-13 |  |  |  |
| RHD4GNPPSuv1000 |  | Prepare & Submit Land surveying works - PP | 6d | 2025-11-30 A | 2025-12-06 A | RHD4GNPSMIS1000 SS | 100% |  |
| RHD4GNPPSuv1100 |  | Review & approval Land surveying works - PP | 6d | 2025-12-07 A | 2025-12-13 A | RHD4GNPPSuv1000 | 100% |  |
|  | 12 | **RHD4-02-002-Shop Drawings Submission Plan** |  | 2025-11-30 | 2026-07-07 |  |  |  |
| RHD4GNPPSD1000 |  | Prepare & Submit Shop Drawings Submission Plan - PP | 7d | 2025-11-30 A | 2026-07-01 A | RHD4GNPSMIS1000 SS | 100% |  |
| RHD4GNPPSD1100 |  | Review & approval Shop Drawings Submission Plan - PP | 6d | 2025-12-08 A | 2026-07-07 A | RHD4GNPPSD1000 | 100% |  |
|  | 13 | **RHD4-02-002-Material submittal plan** |  | 2025-11-30 | 2026-09-30 |  |  |  |
| RHD4GNPPMAT1000 |  | Prepare & Submit Material submittal plan - PP(Completed) | 7d | 2025-11-30 A | 2026-08-03 A | RHD4GNPSMIS1000 SS | 100% |  |
| RHD4GNPPMAT1100 |  | Review & approval Material submittal plan - PP | 4d | 2026-09-27 A | 2026-09-30 A | RHD4GNPSMIS1000 SS, RHD4GNPPMAT1000 | 100% |  |
|  | 14 | **RHD4-02-002-Project Schedule** |  | 2025-11-30 | 2026-04-26 |  |  |  |
| RHD4GNPPBL1000 |  | Prepare & Submit Project Schedule - PP | 8d | 2025-11-30 A | 2026-04-16 A | RHD4GNPSMIS1000 | 100% |  |
| RHD4GNPPBL1100 |  | Review & approval Project Schedule - PP | 8d | 2025-12-09 A | 2026-04-26 A | RHD4GNPPBL1000 | 100% |  |
|  | 15 | **RHD4-02-002-HSE (Health, Safety & Environment) Plan** |  | 2025-11-30 | 2026-01-31 |  |  |  |
| RHD4GNPPHSE1000 |  | Prepare & Submit HSE (Health, Safety & Environment) Plan - PP | 8d | 2025-11-30 A | 2026-01-31 A | RHD4GNPSMIS1000 SS | 100% |  |
| RHD4GNPPHSE1100 |  | Review & approval HSE (Health, Safety & Environment) Plan - PP | 8d | 2025-12-07 A | 2026-01-31 A | RHD4GNPPHSE1000 | 100% |  |
|  | 16 | **RHD4-02-002-Logistic Plan-Site Mobilization Plan** |  | 2026-11-10 | 2026-11-14 |  |  |  |
| RHD4GNPPLOG1000 |  | Prepare & Submit Logistic Plan-Site Mobilization Plan - PP | 2d | 2026-11-10 | 2026-11-11 | RHD4GNPSMIS1000 SS |  | -168.02d |
| RHD4GNPPLOG1100 |  | Review & approval Logistic Plan-Site Mobilization Plan - PP | 2d | 2026-11-12 | 2026-11-14 | RHD4GNPPLOG1000 |  | -168.02d |
|  | 17 | **RHD4-02-002-Organization chart and Recruitment plan** |  | 2025-11-30 | 2026-02-14 |  |  |  |
| RHD4GNPPORG1000 |  | Prepare & Submit Organization chart and Recruitment plan - PP | 12d | 2025-11-30 A | 2026-01-31 A | RHD4GNPSMIS1000 SS | 100% |  |
| RHD4GNPPORG1100 |  | Review & approval Organization chart and Recruitment plan - PP | 12d | 2025-12-14 A | 2026-02-14 A | RHD4GNPPORG1000 | 100% |  |
|  | 18 | **RHD4-02-002-Project management plans** |  | 2025-11-30 | 2026-11-23 |  |  |  |
| RHD4GNPPPMP1000 |  | Prepare & Submit Project management plans - PP(Completed) | 13d | 2025-11-30 A | 2026-08-03 A | RHD4GNPSMIS1000 SS | 100% |  |
| RHD4GNPPPMP1100 |  | Review & approval Project management plans - PP | 12d | 2026-11-10 | 2026-11-23 | RHD4GNPSMIS1000 SS, RHD4GNPPPMP1000 |  | -176.02d |
|  | 8 | **RHD4-02-002-Mobilization - MOB** |  | 2025-12-04 | 2025-12-29 |  |  |  |
| RHD4GNMOB1200 |  | Access Road works - MOB | 14d | 2025-12-04 A | 2025-12-17 A | RHD4GNPSMIS1000 | 100% |  |
| RHD4GNMOB1000 |  | Installing Of Offices - MOB | 10d | 2025-12-09 A | 2025-12-22 A | RHD4GNMOB1200 SS, RHD4GNMOB1200 FF | 100% |  |
| RHD4GNMOB1300 |  | Build up Project Store - MOB | 6d | 2025-12-18 A | 2025-12-24 A | RHD4GNMOB1200 | 100% |  |
| RHD4GNMOB1400 |  | Install of Project Signboard - MOB | 6d | 2025-12-18 A | 2025-12-24 A | RHD4GNMOB1200 | 100% |  |
| RHD4GNMOB1100 |  | Mobalization Of Equipment - MOB | 10d | 2025-12-25 A | 2025-12-29 A | RHD4GNMOB1000, RHD4GNMOB1300, RHD4GNMOB1400 | 100% |  |
| RHD4GNMOB1500 |  | Preparation Of Parking Area - MOB | 6d | 2025-12-25 A | 2025-12-29 A | RHD4GNMOB1000, RHD4GNMOB1300 | 100% |  |
|  | 20 | **RHD4-02-002-Engineering - EN** |  | 2025-11-30 | 2026-12-07 |  |  |  |
|  | 83 | **RHD4-02-002-Method Statement - MS** |  | 2025-11-30 | 2026-11-23 |  |  |  |
|  | 84 | **RHD4-02-002-Earth Works (Excavation, Backfilling) - EW** |  | 2025-11-30 | 2026-01-04 |  |  |  |
| RHD4ENMSEW1000 |  | Prepare & Submit MS for Earth Works (Excavation, Backfilling) - EW- EW | 7d | 2025-11-30 A | 2025-12-28 A | RHD4GNPSMIS1000 SS | 100% |  |
| RHD4ENMSEW2000 |  | Review & approval MS for Earth Works (Excavation, Backfilling) - EW- EW | 7d | 2025-12-06 A | 2026-01-04 A | RHD4ENMSEW1000 | 100% |  |
|  | 85 | **RHD4-02-002-Tunnel - TUN** |  | 2026-05-03 | 2026-05-11 |  |  |  |
| RHD4ENMSTUN1000 |  | Prepare & Submit MS for Tunnel - TUN- TUN | 5d | 2026-05-03 A | 2026-05-07 A | RHD4GNPSMIS1000 SS, RHD4ENMSEW1000 | 100% |  |
| RHD4ENMSTUN2000 |  | Review & approval MS for Tunnel - TUN- TUN | 3d | 2026-05-08 A | 2026-05-11 A | RHD4ENMSTUN1000 | 100% |  |
|  | 86 | **RHD4-02-002-Asphalt Works - ASPH** |  | 2026-01-21 | 2026-04-14 |  |  |  |
| RHD4ENMSASPH1000 |  | Prepare & Submit MS for Asphalt Works - ASPH- ASPH | 68d | 2026-01-21 A | 2026-04-12 A | RHD4GNPSMIS1000 SS, RHD4ENMSTUN1000, RHD4ENMSST1000, RHD4ENMSTUN2000 | 100% |  |
| RHD4ENMSASPH2000 |  | Review & approval MS for Asphalt Works - ASPH- ASPH | 2d | 2026-04-13 A | 2026-04-14 A | RHD4GNMOB1500, RHD4ENMSASPH1000 | 100% |  |
|  | 87 | **RHD4-02-002-Storm Network - ST** |  | 2026-04-11 | 2026-08-03 |  |  |  |
| RHD4ENMSST1000 |  | Prepare & Submit MS for Storm Network - ST- ST(Completed) | 12d | 2026-04-11 A | 2026-08-03 A | RHD4GNPSMIS1000 SS, RHD4ENMSTUN1000 | 100% |  |
| RHD4ENMSST2000 |  | Review & approval MS for Storm Network - ST- ST | 8d | 2026-06-25 A | 2026-06-28 A | RHD4GNPSMIS1000 SS, RHD4ENMSTUN1000, RHD4ENMSST1000 | 100% |  |
|  | 88 | **RHD4-02-002-Sewage Network - SW** |  | 2025-12-17 | 2026-03-04 |  |  |  |
| RHD4ENMSSW1000 |  | Prepare & Submit MS for Sewage Network - SW- SW | 7d | 2025-12-17 A | 2026-03-01 A | RHD4GNPSMIS1000 SS, RHD4GNMOB1200 | 100% |  |
| RHD4ENMSSW2000 |  | Review & approval MS for Sewage Network - SW- SW | 7d | 2025-12-24 A | 2026-03-04 A | RHD4ENMSSW1000 | 100% |  |
|  | 89 | **RHD4-02-002-Potable Network - PT** |  | 2025-12-24 | 2026-06-04 |  |  |  |
| RHD4ENMSPT1000 |  | Prepare & Submit MS for Potable Network - PT- PT | 6d | 2025-12-24 A | 2026-06-01 A | RHD4GNPSMIS1000 SS, RHD4ENMSSW1000 | 100% |  |

| ID | WBS | Task | Duration | Start | Finish | Predecessors | Complete | Total float |
| --- | --- | --- | --- | --- | --- | --- | --- | --- |
| RHD4ENMSPT2000 |  | Review & approval MS for Potable Network - PT- PT | 3d | 2025-12-31 A | 2026-06-04 A | RHD4ENMSPT1000 | 100% |  |
|  | 90 | **RHD4-02-002-Irrigation Network - IRR** |  | 2025-12-31 | 2026-05-09 |  |  |  |
| RHD4ENMSRR1000 |  | Prepare & Submit MS for Irrigation Network - IRR- RR(Completed) | 12d | 2025-12-31 A | 2026-04-28 A | RHD4GNPSMIS1000 SS, RHD4ENMSPT1000 | 100% |  |
| RHD4ENMSRR2000 |  | Review & approval MS for Irrigation Network - IRR- RR | 10d | 2026-01-14 A | 2026-05-09 A | RHD4GNPSMIS1000 SS, RHD4ENMSPT1000, RHD4ENMSRR1000 | 100% |  |
|  | 91 | **RHD4-02-002-Medium Voltage Cables - MV** |  | 2026-11-10 | 2026-11-23 |  |  |  |
| RHD4ENMSMV1000 |  | Prepare & Submit MS for Medium Voltage Cables - MV- MV | 6d | 2026-11-10 | 2026-11-16 | RHD4GNPSMIS1000 SS, RHD4ENMSASPH1000 |  | -189.02d |
| RHD4ENMSMV2000 |  | Review & approval MS for Medium Voltage Cables - MV- MV | 6d | 2026-11-17 | 2026-11-23 | RHD4ENMSMV1000 |  | -189.02d |
|  | 92 | **RHD4-02-002-Low Voltage Cables - LV** |  | 2025-11-30 | 2026-05-10 |  |  |  |
| RHD4ENMSLV1000 |  | Prepare & Submit MS for Low Voltage Cables - LV- LV | 13d | 2025-11-30 A | 2026-05-07 A | RHD4GNPSMIS1000 SS | 100% |  |
| RHD4ENMSLV2000 |  | Review & approval MS for Low Voltage Cables - LV- LV | 2d | 2025-12-15 A | 2026-05-10 A | RHD4ENMSLV1000 | 100% |  |
|  | 93 | **RHD4-02-002-Street Lighting - SL** |  | 2025-11-30 | 2026-05-10 |  |  |  |
| RHD4ENMSSL1000 |  | Prepare & Submit MS for Street Lighting - SL- SL | 13d | 2025-11-30 A | 2026-05-07 A | RHD4GNPSMIS1000 SS | 100% |  |
| RHD4ENMSSL2000 |  | Review & approval MS for Street Lighting - SL- SL | 2d | 2025-12-15 A | 2026-05-10 A | RHD4ENMSSL1000 | 100% |  |
|  | 94 | **RHD4-02-002-Earthing - ER** |  | 2026-01-11 | 2026-06-13 |  |  |  |
| RHD4ENMSER1000 |  | Prepare & Submit MS for Earthing - ER- ER | 6d | 2026-01-11 A | 2026-05-19 A | RHD4GNPSMIS1000 SS, RHD4ENMSMV1000, RHD4ENMSST2000 | 100% |  |
| RHD4ENMSER2000 |  | Review & approval MS for Earthing - ER- ER | 6d | 2026-01-18 A | 2026-06-13 A | RHD4ENMSER1000 | 100% |  |
|  | 95 | **RHD4-02-002-Precast Concrete Curbstone, Interlocking - RD** |  | 2025-11-30 | 2026-06-28 |  |  |  |
| RHD4ENMSRD1000 |  | Prepare & Submit MS for Precast Concrete Curbstone, Interlocking - RD- RD(Completed) | 13d | 2025-11-30 A | 2026-04-16 A | RHD4GNPSMIS1000 SS | 100% |  |
| RHD4ENMSRD2000 |  | Review & approval MS for Precast Concrete Curbstone, Interlocking - RD- RD | 2d | 2026-01-04 A | 2026-06-28 A | RHD4ENMSASPH1000, RHD4GNPSMIS1000 SS, RHD4ENMSRD1000 | 100% |  |
|  | 96 | **RHD4-02-002-Precast Box Culvert - BC** |  | 2026-05-03 | 2026-05-14 |  |  |  |
| RHD4ENMSBC1000 |  | Prepare & Submit MS for Precast Box Culvert - BC- BC | 5d | 2026-05-03 A | 2026-05-07 A | RHD4GNPSMIS1000 SS, RHD4ENMSTUN1000, RHD4ENMSST1000 | 100% |  |
| RHD4ENMSBC2000 |  | Review & approval MS for Precast Box Culvert - BC- BC | 6d | 2026-05-09 A | 2026-05-14 A | RHD4ENMSBC1000 | 100% |  |
|  | 1 | **RHD4-02-002-MS Staging Time - STAG** |  | 2025-12-06 | 2026-12-01 |  |  |  |
|  | 84 | **RHD4-02-002-Earth Works (Excavation, Backfilling) - EW** |  | 2025-12-06 | 2025-12-13 |  |  |  |
| RHD4ENMSEW2010 |  | Staging Time for MS for Earth Works (Excavation, Backfilling) - EW- EW | 7d | 2025-12-06 A | 2025-12-13 A | RHD4ENMSEW2000 | 100% |  |
|  | 85 | **RHD4-02-002-Tunnel - TUN** |  | 2026-05-12 | 2026-05-19 |  |  |  |
| RHD4ENMSTUN2010 |  | Staging Time for MS for Tunnel - TUN- TUN | 7d | 2026-05-12 A | 2026-05-19 A | RHD4ENMSTUN2000 | 100% |  |
|  | 86 | **RHD4-02-002-Asphalt Works - ASPH** |  | 2026-09-01 | 2026-09-08 |  |  |  |
| RHD4ENMSASPH2010 |  | Staging Time for MS for Asphalt Works - ASPH- ASPH | 7d | 2026-09-01 A | 2026-09-08 A | RHD4ENMSASPH2000 | 100% |  |
|  | 87 | **RHD4-02-002-Storm Network - ST** |  | 2026-06-29 | 2026-07-06 |  |  |  |
| RHD4ENMSST2010 |  | Staging Time for MS for Storm Network - ST- ST | 7d | 2026-06-29 A | 2026-07-06 A | RHD4ENMSST2000 | 100% |  |
|  | 88 | **RHD4-02-002-Sewage Network - SW** |  | 2026-01-03 | 2026-03-12 |  |  |  |
| RHD4ENMSSW2010 |  | Staging Time for MS for Sewage Network - SW- SW | 7d | 2026-01-03 A | 2026-03-12 A | RHD4ENMSSW2000 | 100% |  |
|  | 89 | **RHD4-02-002-Potable Network - PT** |  | 2026-01-04 | 2026-06-13 |  |  |  |
| RHD4ENMSPT2010 |  | Staging Time for MS for Potable Network - PT- PT | 7d | 2026-01-04 A | 2026-06-13 A | RHD4ENMSPT2000 | 100% |  |
|  | 90 | **RHD4-02-002-Irrigation Network - IRR** |  | 2026-01-26 | 2026-06-23 |  |  |  |
| RHD4ENMSRR2010 |  | Staging Time for MS for Irrigation Network - IRR- RR | 3d | 2026-01-26 A | 2026-06-23 A | RHD4ENMSRR2000, RHD4ENMSMV2010, RHD4ENMSTUN2010 | 100% |  |
|  | 91 | **RHD4-02-002-Medium Voltage Cables - MV** |  | 2026-11-24 | 2026-12-01 |  |  |  |
| RHD4ENMSMV2010 |  | Staging Time for MS for Medium Voltage Cables - MV- MV | 7d | 2026-11-24 | 2026-12-01 | RHD4ENMSMV2000, RHD4ENMSPT2010, RHD4ENMSSW2010 |  | -189.02d |
|  | 92 | **RHD4-02-002-Low Voltage Cables - LV** |  | 2025-12-17 | 2026-05-14 |  |  |  |
| RHD4ENMSLV2010 |  | Staging Time for MS for Low Voltage Cables - LV- LV | 4d | 2025-12-17 A | 2026-05-14 A | RHD4ENMSLV2000 | 100% |  |
|  | 93 | **RHD4-02-002-Street Lighting - SL** |  | 2025-12-17 | 2026-05-14 |  |  |  |
| RHD4ENMSSL2010 |  | Staging Time for MS for Street Lighting - SL- SL | 4d | 2025-12-17 A | 2026-05-14 A | RHD4ENMSSL2000 | 100% |  |
|  | 94 | **RHD4-02-002-Earthing - ER** |  | 2026-01-25 | 2026-08-18 |  |  |  |
| RHD4ENMSER2010 |  | Staging Time for MS for Earthing - ER- ER | 4d | 2026-01-25 A | 2026-08-18 A | RHD4ENMSER2000, RHD4ENMSBC2010, RHD4ENMSRD2010, RHD4ENMSST2010 | 100% |  |
|  | 95 | **RHD4-02-002-Precast Concrete Curbstone, Interlocking - RD** |  | 2026-01-06 | 2026-07-06 |  |  |  |
| RHD4ENMSRD2010 |  | Staging Time for MS for Precast Concrete Curbstone, Interlocking - RD- RD | 7d | 2026-01-06 A | 2026-07-06 A | RHD4ENMSRD2000 | 100% |  |
|  | 96 | **RHD4-02-002-Precast Box Culvert - BC** |  | 2026-05-16 | 2026-05-23 |  |  |  |
| RHD4ENMSBC2010 |  | Staging Time for MS for Precast Box Culvert - BC- BC | 7d | 2026-05-16 A | 2026-05-23 A | RHD4ENMSBC2000 | 100% |  |
|  | 21 | **RHD4-02-002-Shop Drawings - SD** |  | 2025-12-04 | 2026-11-30 |  |  |  |
|  | 22 | **RHD4-02-002-Shop Drawing Submittals - SUB** |  | 2025-12-04 | 2026-11-16 |  |  |  |
|  | 23 | **RHD4-02-002-Shop Drawing Submittals - SUB-Z1** |  | 2025-12-14 | 2026-11-16 |  |  |  |
| RHD4ENSDZ1SUBSW120 |  | Prepare and Submit Shop Drawings for Sewage Network for SW-Z1-SUB | 6d | 2025-12-14 A | 2026-02-11 A | RHD4ENSDZ1SUBST110 SS | 100% |  |
| RHD4ENSDZ1SUBEW100 |  | Prepare and Submit Shop Drawings for Road Plans and Profile for EW-Z1-SUB | 6d | 2025-12-20 A | 2026-07-05 A | RHD4GNPPSoL1100, RHD4GNPPSuv1100, RHD4GNPPSD1100 FF | 100% |  |
| RHD4ENSDZ1SUBRD220 |  | Prepare and Submit Shop Drawings for Road Works( KERBING AND PAVEMENT ) for RD-Z1-SUB(Completed) | 7d | 2025-12-20 A | 2026-05-11 A | RHD4GNPPSD1100 FF, RHD4ENSDZ4SUBRD220 | 100% |  |
| RHD4ENSDZ1SUBPT130 |  | Prepare and Submit Shop Drawings for Potable Water Network for PT-Z1-SUB | 6d | 2025-12-21 A | 2026-02-12 A | RHD4ENSDZ1SUBSW120 | 100% |  |
| RHD4ENSDZ1SUBIRR140 |  | Prepare and Submit Shop Drawings for Irrigation Network for IRR-Z1-SUB | 6d | 2025-12-28 A | 2026-02-18 A | RHD4ENSDZ1SUBPT130 | 100% |  |
| RHD4ENSDZ1SUBCCTV210 |  | Prepare and Submit Shop Drawings for Security Network for CCTV-Z1-SUB | 6d | 2026-01-04 A | 2026-03-03 A | RHD4ENSDZ1SUBICT200 SS | 100% |  |
| RHD4ENSDZ1SUBICT200 |  | Prepare and Submit Shop Drawings for Information and Communication Technologies Network for ICT-Z1-SUB | 6d | 2026-01-04 A | 2026-03-03 A | RHD4ENSDZ1SUBTC190 SS | 100% |  |
| RHD4ENSDZ1SUBLV160 |  | Prepare and Submit Shop Drawings for Low Voltage Network for LV-Z1-SUB | 6d | 2026-01-04 A | 2026-02-26 A | RHD4ENSDZ1SUBSL170 SS | 100% |  |
| RHD4ENSDZ1SUBSL170 |  | Prepare and Submit Shop Drawings for Street Lighting Network for SL-Z1-SUB | 6d | 2026-01-04 A | 2026-03-01 A | RHD4ENSDZ1SUBRD220 SS | 100% |  |
| RHD4ENSDZ1SUBTC190 |  | Prepare and Submit Shop Drawings for Telecommunications Network for TC-Z1-SUB | 6d | 2026-01-04 A | 2026-02-25 A | RHD4ENSDZ1SUBLV160 SS | 100% |  |
| RHD4ENSDZ1SUBST110 |  | Prepare and Submit Shop Drawings for Storm Water Network for ST-Z1-SUB | 6d | 2026-01-27 A | 2026-02-02 A | RHD4ENSDZ1SUBEW100 SS | 100% |  |
| RHD4ENSDZ1SUBMV150 |  | Prepare and Submit Shop Drawings for Medium Voltage Network for MV-Z1-SUB | 6d | 2026-11-10 | 2026-11-16 | RHD4GNPPSD1100, RHD4ENSDZ1SUBIRR140 |  | -182.02d |
|  | 24 | **RHD4-02-002-Shop Drawing Submittals - SUB-Z2** |  | 2025-12-20 | 2026-11-16 |  |  |  |
| RHD4ENSDZ2SUBEW100 |  | Prepare and Submit Shop Drawings for Road Plans and Profile for SUB-SD-Z2 | 7d | 2025-12-20 A | 2026-07-05 A | RHD4GNPPSoL1100, RHD4GNPPSuv1100, RHD4GNPPSD1100 FF | 100% |  |
| RHD4ENSDZ2SUBRD220 |  | Prepare and Submit Shop Drawings for Road Works( KERBING AND PAVEMENT ) for SUB-SD-Z2(Completed) | 7d | 2025-12-20 A | 2026-08-03 A | RHD4GNPPSD1100 FF, RHD4ENSDZ4SUBRD220, RHD4ENSDZ1SUBST110 | 100% |  |
| RHD4ENSDZ2SUBSW120 |  | Prepare and Submit Shop Drawings for Sewage Network for SUB-SD-Z2 | 7d | 2025-12-21 A | 2026-02-11 A | RHD4ENSDZ2SUBST110 SS | 100% |  |
| RHD4ENSDZ2SUBPT130 |  | Prepare and Submit Shop Drawings for Potable Water Network for SUB-SD-Z2 | 7d | 2025-12-22 A | 2026-02-12 A | RHD4ENSDZ2SUBSW120 SS | 100% |  |
| RHD4ENSDZ2SUBIRR140 |  | Prepare and Submit Shop Drawings for Irrigation Network for SUB-SD-Z2 | 7d | 2025-12-30 A | 2026-02-18 A | RHD4ENSDZ2SUBPT130 | 100% |  |

| ID | WBS | Task | Duration | Start | Finish | Predecessors | Complete | Total float |
| --- | --- | --- | --- | --- | --- | --- | --- | --- |
| RHD4ENSDZ2SUBCCTV210 |  | Prepare and Submit Shop Drawings for Security Network for SUB-SD-Z2 | 7d | 2026-01-04 A | 2026-03-03 A | RHD4ENSDZ2SUBICT200 SS | 100% |  |
| RHD4ENSDZ2SUBICT200 |  | Prepare and Submit Shop Drawings for Information and Communication Technologies Network for SUB-SD-Z2 | 7d | 2026-01-04 A | 2026-03-03 A | RHD4ENSDZ2SUBTC190 SS | 100% |  |
| RHD4ENSDZ2SUBLV160 |  | Prepare and Submit Shop Drawings for Low Voltage Network for SUB-SD-Z2 | 7d | 2026-01-04 A | 2026-02-26 A | RHD4ENSDZ2SUBSL170 SS | 100% |  |
| RHD4ENSDZ2SUBSL170 |  | Prepare and Submit Shop Drawings for Street Lighting Network for SUB-SD-Z2 | 7d | 2026-01-04 A | 2026-03-01 A | RHD4ENSDZ2SUBRD220 SS | 100% |  |
| RHD4ENSDZ2SUBTC190 |  | Prepare and Submit Shop Drawings for Telecommunications Network for SUB-SD-Z2 | 6d | 2026-01-04 A | 2026-03-04 A | RHD4ENSDZ2SUBLV160 SS | 100% |  |
| RHD4ENSDZ2SUBST110 |  | Prepare and Submit Shop Drawings for Storm Water Network for SUB-SD-Z2 | 6d | 2026-01-27 A | 2026-02-02 A | RHD4ENSDZ2SUBEW100 | 100% |  |
| RHD4ENSDZ2SUBMV150 |  | Prepare and Submit Shop Drawings for Medium Voltage Network for SUB-SD-Z2 | 6d | 2026-11-10 | 2026-11-16 | RHD4GNPPSD1100, RHD4ENSDZ2SUBIRR140 |  | -182.02d |
|  | 25 | **RHD4-02-002-Shop Drawing Submittals - SUB-Z3** |  | 2025-12-20 | 2026-11-16 |  |  |  |
| RHD4ENSDZ3SUBEW100 |  | Prepare and Submit Shop Drawings for Road Plans and Profile for SUB-SD-Z3 | 6d | 2025-12-20 A | 2026-07-08 A | RHD4GNPPSoL1100, RHD4GNPPSuv1100 | 100% |  |
| RHD4ENSDZ3SUBRD220 |  | Prepare and Submit Shop Drawings for Road Works( KERBING AND PAVEMENT ) for SUB-SD-Z3 | 6d | 2025-12-20 A | 2026-07-08 A | RHD4GNMOB1200 | 100% |  |
| RHD4ENSDZ3SUBPT130 |  | Prepare and Submit Shop Drawings for Potable Water Network for SUB-SD-Z3 | 6d | 2025-12-21 A | 2026-02-12 A | RHD4ENSDZ3SUBSW120 SS | 100% |  |
| RHD4ENSDZ3SUBSW120 |  | Prepare and Submit Shop Drawings for Sewage Network for SUB-SD-Z3 | 6d | 2025-12-21 A | 2026-02-11 A | RHD4ENSDZ3SUBST110 SS | 100% |  |
| RHD4ENSDZ3SUBCCTV210 |  | Prepare and Submit Shop Drawings for Security Network for SUB-SD-Z3 | 6d | 2025-12-23 A | 2026-03-03 A | RHD4ENSDZ3SUBICT200 SS | 100% |  |
| RHD4ENSDZ3SUBICT200 |  | Prepare and Submit Shop Drawings for Information and Communication Technologies Network for SUB-SD-Z3 | 6d | 2025-12-23 A | 2026-03-03 A | RHD4ENSDZ3SUBTC190 SS | 100% |  |
| RHD4ENSDZ3SUBLV160 |  | Prepare and Submit Shop Drawings for Low Voltage Network for SUB-SD-Z3 | 6d | 2025-12-23 A | 2026-02-26 A | RHD4ENSDZ3SUBSL170 SS | 100% |  |
| RHD4ENSDZ3SUBSL170 |  | Prepare and Submit Shop Drawings for Street Lighting Network for SUB-SD-Z3 | 6d | 2025-12-23 A | 2026-03-01 A | RHD4ENSDZ3SUBRD220 | 100% |  |
| RHD4ENSDZ3SUBTC190 |  | Prepare and Submit Shop Drawings for Telecommunications Network for SUB-SD-Z3 | 6d | 2025-12-23 A | 2026-03-04 A | RHD4ENSDZ3SUBLV160 SS | 100% |  |
| RHD4ENSDZ3SUBIRR140 |  | Prepare and Submit Shop Drawings for Irrigation Network for SUB-SD-Z3 | 6d | 2025-12-28 A | 2026-02-18 A | RHD4ENSDZ3SUBPT130 | 100% |  |
| RHD4ENSDZ3SUBST110 |  | Prepare and Submit Shop Drawings for Storm Water Network for SUB-SD-Z3 | 6d | 2026-01-27 A | 2026-02-02 A | RHD4ENSDZ3SUBEW100 | 100% |  |
| RHD4ENSDZ3SUBMV150 |  | Prepare and Submit Shop Drawings for Medium Voltage Network for SUB-SD-Z3 | 6d | 2026-11-10 | 2026-11-16 | RHD4GNPPSD1100, RHD4ENSDZ3SUBIRR140 |  | -182.02d |
|  | 26 | **RHD4-02-002-Shop Drawing Submittals - SUB-Z4** |  | 2025-12-14 | 2026-11-16 |  |  |  |
| RHD4ENSDZ4SUBPT130 |  | Prepare and Submit Shop Drawings for Potable Water Network for SUB-SD-Z4 | 6d | 2025-12-14 A | 2026-02-12 A | RHD4ENSDZ4SUBSW120 SS | 100% |  |
| RHD4ENSDZ4SUBEW100 |  | Prepare and Submit Shop Drawings for Road Plans and Profile for SUB-SD-Z4 | 9d | 2025-12-20 A | 2026-02-02 A | RHD4GNPPSoL1100, RHD4GNPPSuv1100 | 100% |  |
| RHD4ENSDZ4SUBRD220 |  | Prepare and Submit Shop Drawings for Road Works( KERBING AND PAVEMENT ) for SUB-SD-Z4 | 9d | 2025-12-20 A | 2026-02-09 A | RHD4GNPPSD1100 FF, RHD4ENSDZ4SUBEW100, RHD4ENSDZ1SUBSW120 | 100% |  |
| RHD4ENSDZ4SUBIRR140 |  | Prepare and Submit Shop Drawings for Irrigation Network for SUB-SD-Z4 | 6d | 2025-12-21 A | 2026-02-18 A | RHD4ENSDZ4SUBPT130 | 100% |  |
| RHD4ENSDZ4SUBSW120 |  | Prepare and Submit Shop Drawings for Sewage Network for SUB-SD-Z4 | 7d | 2025-12-21 A | 2026-02-11 A | RHD4ENSDZ4SUBST110 SS | 100% |  |
| RHD4ENSDZ4SUBCCTV210 |  | Prepare and Submit Shop Drawings for Security Network for SUB-SD-Z4 | 7d | 2025-12-24 A | 2026-03-03 A | RHD4ENSDZ4SUBICT200 SS | 100% |  |
| RHD4ENSDZ4SUBICT200 |  | Prepare and Submit Shop Drawings for Information and Communication Technologies Network for SUB-SD-Z4 | 7d | 2025-12-24 A | 2026-03-03 A | RHD4ENSDZ4SUBTC190 SS | 100% |  |
| RHD4ENSDZ4SUBLV160 |  | Prepare and Submit Shop Drawings for Low Voltage Network for SUB-SD-Z4 | 7d | 2025-12-24 A | 2026-02-26 A | RHD4ENSDZ4SUBSL170 SS | 100% |  |
| RHD4ENSDZ4SUBSL170 |  | Prepare and Submit Shop Drawings for Street Lighting Network for SUB-SD-Z4 | 7d | 2025-12-24 A | 2026-03-01 A | RHD4ENSDZ4SUBRD220 SS | 100% |  |
| RHD4ENSDZ4SUBTC190 |  | Prepare and Submit Shop Drawings for Telecommunications Network for SUB-SD-Z4 | 6d | 2025-12-24 A | 2026-03-04 A | RHD4ENSDZ4SUBLV160 SS | 100% |  |
| RHD4ENSDZ4SUBST110 |  | Prepare and Submit Shop Drawings for Storm Water Network for SUB-SD-Z4 | 6d | 2026-01-27 A | 2026-02-02 A | RHD4ENSDZ4SUBEW100 SS | 100% |  |
| RHD4ENSDZ4SUBMV150 |  | Prepare and Submit Shop Drawings for Medium Voltage Network for SUB-SD-Z4 | 6d | 2026-11-10 | 2026-11-16 | RHD4GNPPSD1100, RHD4ENSDZ4SUBIRR140 |  | -182.02d |
|  | 27 | **RHD4-02-002-Shop Drawing Submittals - SUB-Z5** |  | 2025-12-14 | 2026-11-16 |  |  |  |
| RHD4ENSDZ5SUBPT130 |  | Prepare and Submit Shop Drawings for Potable Water Network for SUB-SD-Z5 | 6d | 2025-12-14 A | 2026-02-12 A | RHD4ENSDZ5SUBSW120 SS | 100% |  |
| RHD4ENSDZ5SUBCCTV210 |  | Prepare and Submit Shop Drawings for Security Network for SUB-SD-Z5 | 7d | 2025-12-15 A | 2026-03-03 A | RHD4ENSDZ5SUBICT200 SS | 100% |  |
| RHD4ENSDZ5SUBICT200 |  | Prepare and Submit Shop Drawings for Information and Communication Technologies Network for SUB-SD-Z5 | 7d | 2025-12-15 A | 2026-03-03 A | RHD4ENSDZ5SUBTC190 SS | 100% |  |
| RHD4ENSDZ5SUBLV160 |  | Prepare and Submit Shop Drawings for Low Voltage Network for SUB-SD-Z5 | 7d | 2025-12-15 A | 2026-02-26 A | RHD4ENSDZ5SUBSL170 SS | 100% |  |
| RHD4ENSDZ5SUBSL170 |  | Prepare and Submit Shop Drawings for Street Lighting Network for SUB-SD-Z5 | 7d | 2025-12-15 A | 2026-03-01 A | RHD4ENSDZ5SUBRD220 SS | 100% |  |
| RHD4ENSDZ5SUBTC190 |  | Prepare and Submit Shop Drawings for Telecommunications Network for SUB-SD-Z5 | 6d | 2025-12-15 A | 2026-03-04 A | RHD4ENSDZ5SUBLV160 SS | 100% |  |
| RHD4ENSDZ5SUBEW100 |  | Prepare and Submit Shop Drawings for Road Plans and Profile for SUB-SD-Z5 | 6d | 2025-12-20 A | 2026-02-04 A | RHD4GNPPSoL1100, RHD4GNPPSuv1100, RHD4GNPPSD1100 FF | 100% |  |
| RHD4ENSDZ5SUBRD220 |  | Prepare and Submit Shop Drawings for Road Works( KERBING AND PAVEMENT ) for SUB-SD-Z5(Completed) | 7d | 2025-12-20 A | 2026-08-03 A | RHD4GNPPSD1100 FF, RHD4ENSDZ6SUBRD220 | 100% |  |
| RHD4ENSDZ5SUBIRR140 |  | Prepare and Submit Shop Drawings for Irrigation Network for SUB-SD-Z5 | 6d | 2025-12-21 A | 2026-02-18 A | RHD4ENSDZ5SUBPT130 | 100% |  |
| RHD4ENSDZ5SUBSW120 |  | Prepare and Submit Shop Drawings for Sewage Network for SUB-SD-Z5 | 7d | 2025-12-21 A | 2026-02-11 A | RHD4ENSDZ5SUBST110 SS | 100% |  |
| RHD4ENSDZ5SUBST110 |  | Prepare and Submit Shop Drawings for Storm Water Network for SUB-SD-Z5 | 6d | 2026-01-27 A | 2026-02-02 A | RHD4ENSDZ5SUBEW100 SS | 100% |  |
| RHD4ENSDZ5SUBMV150 |  | Prepare and Submit Shop Drawings for Medium Voltage Network for SUB-SD-Z5 | 6d | 2026-11-10 | 2026-11-16 | RHD4GNPPSD1100, RHD4ENSDZ5SUBIRR140 |  | -188.02d |
|  | 28 | **RHD4-02-002-Shop Drawing Submittals - SUB-Z6** |  | 2025-12-04 | 2026-11-16 |  |  |  |
| RHD4ENSDZ6SUBCCTV210 |  | Prepare and Submit Shop Drawings for Security Network for SUB-SD-Z6 | 7d | 2025-12-04 A | 2026-03-03 A | RHD4ENSDZ6SUBICT200 SS | 100% |  |
| RHD4ENSDZ6SUBICT200 |  | Prepare and Submit Shop Drawings for Information and Communication Technologies Network for SUB-SD-Z6 | 7d | 2025-12-04 A | 2026-03-03 A | RHD4ENSDZ6SUBTC190 SS | 100% |  |
| RHD4ENSDZ6SUBLV160 |  | Prepare and Submit Shop Drawings for Low Voltage Network for SUB-SD-Z6 | 7d | 2025-12-04 A | 2026-02-26 A | RHD4ENSDZ6SUBSL170 SS | 100% |  |
| RHD4ENSDZ6SUBRD220 |  | Prepare and Submit Shop Drawings for Road Works( KERBING AND PAVEMENT ) for SUB-SD-Z6 | 9d | 2025-12-04 A | 2026-02-09 A | RHD4GNPSMIS1000 SS, RHD4GNPPSD1100 FF | 100% |  |
| RHD4ENSDZ6SUBSL170 |  | Prepare and Submit Shop Drawings for Street Lighting Network for SUB-SD-Z6 | 7d | 2025-12-04 A | 2026-03-01 A | RHD4ENSDZ6SUBRD220 SS | 100% |  |
| RHD4ENSDZ6SUBTC190 |  | Prepare and Submit Shop Drawings for Telecommunications Network for SUB-SD-Z6 | 6d | 2025-12-04 A | 2026-03-04 A | RHD4ENSDZ6SUBLV160 SS | 100% |  |
| RHD4ENSDZ6SUBPT130 |  | Prepare and Submit Shop Drawings for Potable Water Network for SUB-SD-Z6 | 6d | 2025-12-14 A | 2026-02-12 A | RHD4ENSDZ6SUBSW120 SS | 100% |  |
| RHD4ENSDZ6SUBEW100 |  | Prepare and Submit Shop Drawings for Road Plans and Profile for SUB-SD-Z6 | 7d | 2025-12-20 A | 2026-02-02 A | RHD4GNPPSoL1100, RHD4GNPPSuv1100, RHD4GNPPSD1100 FF | 100% |  |
| RHD4ENSDZ6SUBIRR140 |  | Prepare and Submit Shop Drawings for Irrigation Network for SUB-SD-Z6 | 6d | 2025-12-21 A | 2026-02-18 A | RHD4ENSDZ6SUBPT130 | 100% |  |
| RHD4ENSDZ6SUBSW120 |  | Prepare and Submit Shop Drawings for Sewage Network for SUB-SD-Z6 | 7d | 2025-12-21 A | 2026-02-11 A | RHD4ENSDZ6SUBST110 SS | 100% |  |
| RHD4ENSDZ6SUBST110 |  | Prepare and Submit Shop Drawings for Storm Water Network for SUB-SD-Z6 | 6d | 2026-01-27 A | 2026-02-02 A | RHD4ENSDZ6SUBEW100 SS | 100% |  |
| RHD4ENSDZ6SUBMV150 |  | Prepare and Submit Shop Drawings for Medium Voltage Network for SUB-SD-Z6 | 6d | 2026-11-10 | 2026-11-16 | RHD4GNPPSD1100, RHD4ENSDZ6SUBIRR140 |  | -182.02d |
|  | 29 | **RHD4-02-002-Shop Drawing Submittals - SUB-Z7** |  | 2025-12-14 | 2026-11-16 |  |  |  |
| RHD4ENSDZ7SUBPT130 |  | Prepare and Submit Shop Drawings for Potable Water Network for SUB-SD-Z7 | 6d | 2025-12-14 A | 2026-02-12 A | RHD4ENSDZ7SUBSW120 SS | 100% |  |
| RHD4ENSDZ7SUBCCTV210 |  | Prepare and Submit Shop Drawings for Security Network for SUB-SD-Z7 | 7d | 2025-12-15 A | 2026-03-03 A | RHD4ENSDZ7SUBICT200 SS | 100% |  |
| RHD4ENSDZ7SUBICT200 |  | Prepare and Submit Shop Drawings for Information and Communication Technologies Network for SUB-SD-Z7 | 7d | 2025-12-15 A | 2026-03-03 A | RHD4ENSDZ7SUBTC190 SS | 100% |  |
| RHD4ENSDZ7SUBLV160 |  | Prepare and Submit Shop Drawings for Low Voltage Network for SUB-SD-Z7 | 7d | 2025-12-15 A | 2026-02-26 A | RHD4ENSDZ7SUBSL170 SS | 100% |  |
| RHD4ENSDZ7SUBSL170 |  | Prepare and Submit Shop Drawings for Street Lighting Network for SUB-SD-Z7 | 7d | 2025-12-15 A | 2026-03-01 A | RHD4ENSDZ7SUBRD220 SS | 100% |  |
| RHD4ENSDZ7SUBTC190 |  | Prepare and Submit Shop Drawings for Telecommunications Network for SUB-SD-Z7 | 6d | 2025-12-15 A | 2026-03-04 A | RHD4ENSDZ7SUBLV160 SS | 100% |  |
| RHD4ENSDZ7SUBEW100 |  | Prepare and Submit Shop Drawings for Road Plans and Profile for SUB-SD-Z7 | 7d | 2025-12-20 A | 2026-02-02 A | RHD4GNPPSoL1100, RHD4GNPPSuv1100, RHD4GNPPSD1100 FF | 100% |  |
| RHD4ENSDZ7SUBRD220 |  | Prepare and Submit Shop Drawings for Road Works( KERBING AND PAVEMENT ) for SUB-SD-Z7(Completed) | 7d | 2025-12-20 A | 2026-08-03 A | RHD4GNPPSD1100 FF, RHD4ENSDZ6SUBRD220 | 100% |  |
| RHD4ENSDZ7SUBIRR140 |  | Prepare and Submit Shop Drawings for Irrigation Network for SUB-SD-Z7 | 6d | 2025-12-21 A | 2026-02-18 A | RHD4ENSDZ7SUBPT130 | 100% |  |
| RHD4ENSDZ7SUBSW120 |  | Prepare and Submit Shop Drawings for Sewage Network for SUB-SD-Z7 | 7d | 2025-12-21 A | 2026-02-11 A | RHD4ENSDZ7SUBST110 SS | 100% |  |

| ID | WBS | Task | Duration | Start | Finish | Predecessors | Complete | Total float |
| --- | --- | --- | --- | --- | --- | --- | --- | --- |
| RHD4ENSDZ7SUBST110 |  | Prepare and Submit Shop Drawings for Storm Water Network for SUB-SD-Z7 | 6d | 2026-01-27 A | 2026-02-02 A | RHD4ENSDZ7SUBEW100 SS | 100% |  |
| RHD4ENSDZ7SUBMV150 |  | Prepare and Submit Shop Drawings for Medium Voltage Network for SUB-SD-Z7 | 6d | 2026-11-10 | 2026-11-16 | RHD4GNPPSD1100, RHD4ENSDZ7SUBIRR140 |  | -182.02d |
|  | 30 | **RHD4-02-002-Shop Drawing Submittals - SUB-Z8** |  | 2025-12-20 | 2026-11-16 |  |  |  |
| RHD4ENSDZ8SUBEW100 |  | Prepare and Submit Shop Drawings for Road Plans and Profile for SUB-SD-Z8 | 7d | 2025-12-20 A | 2026-07-02 A | RHD4GNPPSoL1100, RHD4GNPPSuv1100 | 100% |  |
| RHD4ENSDZ8SUBRD220 |  | Prepare and Submit Shop Drawings for Road Works( KERBING AND PAVEMENT ) for SUB-SD-Z8 | 7d | 2025-12-20 A | 2026-07-02 A | RHD4ENSDZ3SUBRD220 | 100% |  |
| RHD4ENSDZ8SUBSW120 |  | Prepare and Submit Shop Drawings for Sewage Network for SUB-SD-Z8 | 7d | 2025-12-21 A | 2026-02-11 A | RHD4ENSDZ8SUBST110 SS | 100% |  |
| RHD4ENSDZ8SUBPT130 |  | Prepare and Submit Shop Drawings for Potable Water Network for SUB-SD-Z8 | 6d | 2025-12-22 A | 2026-02-12 A | RHD4ENSDZ8SUBSW120 SS | 100% |  |
| RHD4ENSDZ8SUBIRR140 |  | Prepare and Submit Shop Drawings for Irrigation Network for SUB-SD-Z8 | 6d | 2025-12-29 A | 2026-02-18 A | RHD4ENSDZ8SUBPT130 | 100% |  |
| RHD4ENSDZ8SUBCCTV210 |  | Prepare and Submit Shop Drawings for Security Network for SUB-SD-Z8 | 7d | 2025-12-31 A | 2026-03-03 A | RHD4ENSDZ8SUBICT200 SS | 100% |  |
| RHD4ENSDZ8SUBICT200 |  | Prepare and Submit Shop Drawings for Information and Communication Technologies Network for SUB-SD-Z8 | 7d | 2025-12-31 A | 2026-03-03 A | RHD4ENSDZ8SUBTC190 SS | 100% |  |
| RHD4ENSDZ8SUBLV160 |  | Prepare and Submit Shop Drawings for Low Voltage Network for SUB-SD-Z8 | 7d | 2025-12-31 A | 2026-02-26 A | RHD4ENSDZ8SUBSL170 SS | 100% |  |
| RHD4ENSDZ8SUBSL170 |  | Prepare and Submit Shop Drawings for Street Lighting Network for SUB-SD-Z8 | 7d | 2025-12-31 A | 2026-03-01 A | RHD4ENSDZ8SUBRD220 | 100% |  |
| RHD4ENSDZ8SUBTC190 |  | Prepare and Submit Shop Drawings for Telecommunications Network for SUB-SD-Z8 | 6d | 2025-12-31 A | 2026-03-04 A | RHD4ENSDZ8SUBLV160 SS | 100% |  |
| RHD4ENSDZ8SUBST110 |  | Prepare and Submit Shop Drawings for Storm Water Network for SUB-SD-Z8 | 6d | 2026-01-27 A | 2026-02-02 A | RHD4ENSDZ8SUBEW100 | 100% |  |
| RHD4ENSDZ8SUBMV150 |  | Prepare and Submit Shop Drawings for Medium Voltage Network for SUB-SD-Z8 | 6d | 2026-11-10 | 2026-11-16 | RHD4GNPPSD1100, RHD4ENSDZ8SUBIRR140 |  | -182.02d |
|  | 31 | **RHD4-02-002-Shop Drawing Submittals - SUB-Z9** |  | 2025-12-14 | 2026-11-16 |  |  |  |
| RHD4ENSDZ9SUBPT130 |  | Prepare and Submit Shop Drawings for Potable Water Network for SUB-SD-Z9 | 6d | 2025-12-14 A | 2026-02-12 A | RHD4ENSDZ9SUBSW120 SS | 100% |  |
| RHD4ENSDZ9SUBCCTV210 |  | Prepare and Submit Shop Drawings for Security Network for SUB-SD-Z9 | 7d | 2025-12-15 A | 2026-03-03 A | RHD4ENSDZ9SUBICT200 SS | 100% |  |
| RHD4ENSDZ9SUBICT200 |  | Prepare and Submit Shop Drawings for Information and Communication Technologies Network for SUB-SD-Z9 | 7d | 2025-12-15 A | 2026-03-03 A | RHD4ENSDZ9SUBTC190 SS | 100% |  |
| RHD4ENSDZ9SUBLV160 |  | Prepare and Submit Shop Drawings for Low Voltage Network for SUB-SD-Z9 | 7d | 2025-12-15 A | 2026-02-26 A | RHD4ENSDZ9SUBSL170 SS | 100% |  |
| RHD4ENSDZ9SUBSL170 |  | Prepare and Submit Shop Drawings for Street Lighting Network for SUB-SD-Z9 | 7d | 2025-12-15 A | 2026-03-01 A | RHD4ENSDZ9SUBRD220 SS | 100% |  |
| RHD4ENSDZ9SUBTC190 |  | Prepare and Submit Shop Drawings for Telecommunications Network for SUB-SD-Z9 | 6d | 2025-12-15 A | 2026-03-04 A | RHD4ENSDZ9SUBLV160 SS | 100% |  |
| RHD4ENSDZ9SUBEW100 |  | Prepare and Submit Shop Drawings for Road Plans and Profile for SUB-SD-Z9 | 7d | 2025-12-20 A | 2026-02-02 A | RHD4GNPPSoL1100, RHD4GNPPSuv1100, RHD4GNPPSD1100 FF | 100% |  |
| RHD4ENSDZ9SUBRD220 |  | Prepare and Submit Shop Drawings for Road Works( KERBING AND PAVEMENT ) for SUB-SD-Z9(Completed) | 7d | 2025-12-20 A | 2026-08-03 A | RHD4GNPPSD1100 FF, RHD4ENSDZ6SUBRD220 | 100% |  |
| RHD4ENSDZ9SUBIRR140 |  | Prepare and Submit Shop Drawings for Irrigation Network for SUB-SD-Z9 | 6d | 2025-12-21 A | 2026-02-18 A | RHD4ENSDZ9SUBPT130 | 100% |  |
| RHD4ENSDZ9SUBSW120 |  | Prepare and Submit Shop Drawings for Sewage Network for SUB-SD-Z9 | 7d | 2025-12-21 A | 2026-02-11 A | RHD4ENSDZ9SUBST110 SS | 100% |  |
| RHD4ENSDZ9SUBST110 |  | Prepare and Submit Shop Drawings for Storm Water Network for SUB-SD-Z9 | 6d | 2026-01-27 A | 2026-02-02 A | RHD4ENSDZ9SUBEW100 SS | 100% |  |
| RHD4ENSDZ9SUBMV150 |  | Prepare and Submit Shop Drawings for Medium Voltage Network for SUB-SD-Z9 | 6d | 2026-11-10 | 2026-11-16 | RHD4GNPPSD1100, RHD4ENSDZ9SUBIRR140 |  | -182.02d |
|  | 32 | **RHD4-02-002-Shop Drawing Submittals - SUB-Tunne 1 - TUN1** |  | 2025-12-15 | 2026-08-03 |  |  |  |
| RHD4ENSDTUN1SUB1100 |  | Prepare and Submit Shop Drawings for TUNNEL 1 (SECTIONS) -Z5 for -TUN1-SUB(Completed) | 7d | 2025-12-15 A | 2026-08-03 A | RHD4GNPPSD1100 FF, RHD4ENSDZ6SUBRD220 | 100% |  |
| RHD4ENSDTUN1SUB1200 |  | Prepare and Submit Shop Drawings for TUNNEL 1 (BBS) -Z5 for -TUN1-SUB(Completed) | 7d | 2025-12-15 A | 2026-08-03 A | RHD4GNPPSD1100 FF, RHD4ENSDZ6SUBRD220 | 100% |  |
| RHD4ENSDTUN1SUB1000 |  | Prepare and Submit Shop Drawings for TUNNEL 1 (PLANS) -Z5 for -TUN1-SUB | 7d | 2025-12-25 A | 2026-01-07 A | RHD4ENSDZ8SUBRD220, RHD4GNPPHSE1100 | 100% |  |
|  | 36 | **RHD4-02-002-Shop Drawing Submittals - SUB-Storm Lift Station 1 - STL1** |  | 2026-01-31 | 2026-08-03 |  |  |  |
| RHD4ENSDSTL1SUB1000 |  | Prepare and Submit Shop Drawings for Storm Lift Station 1 - Z5 - Structure Package for SD-STL1-SUB | 12d | 2026-01-31 A | 2026-02-12 A | RHD4GNMOB1200 | 100% |  |
| RHD4ENSDSTL1SUB2000 |  | Prepare and Submit Shop Drawings for Storm Lift Station 1 - Z5 - Architecture Package for SD-STL1-SUB(Completed) | 7d | 2026-01-31 A | 2026-08-03 A | RHD4GNPPSD1100 FF, RHD4ENSDZ6SUBRD220 | 100% |  |
| RHD4ENSDSTL1SUB3000 |  | Prepare and Submit Shop Drawings for Storm Lift Station 1 - Z5 - Mechanical Package for SD-STL1-SUB(Completed) | 7d | 2026-03-01 A | 2026-08-03 A | RHD4GNPPSD1100 FF, RHD4ENSDZ6SUBRD220 | 100% |  |
| RHD4ENSDSTL1SUB4000 |  | Prepare and Submit Shop Drawings for Storm Lift Station 1 - Z5 - Electrical Package for SD-STL1-SUB | 12d | 2026-03-23 A | 2026-04-05 A | RHD4ENSDSTL1SUB1000 | 100% |  |
|  | 34 | **RHD4-02-002-Shop Drawing Submittals - SUB-Sewage Lift Station 1 - SWL1** |  | 2025-12-15 | 2026-08-03 |  |  |  |
| RHD4ENSDSWL1SUB2000 |  | Prepare and Submit Shop Drawings for Sewage Lift Station 1 - Z3 - Architecture Package for -SWL1-SUB(Completed) | 7d | 2025-12-15 A | 2026-08-03 A | RHD4ENSDSTL1SUB2000 SS, RHD4GNPPSD1100 FF | 100% |  |
| RHD4ENSDSWL1SUB3000 |  | Prepare and Submit Shop Drawings for Sewage Lift Station 1 - Z3 - Mechanical Package for -SWL1-SUB(Completed) | 7d | 2025-12-15 A | 2026-08-03 A | RHD4ENSDSTL1SUB3000 SS, RHD4GNPPSD1100 FF | 100% |  |
| RHD4ENSDSWL1SUB1000 |  | Prepare and Submit Shop Drawings for Sewage Lift Station 1 - Z3 - Structure Package for -SWL1-SUB | 14.3d | 2025-12-30 A | 2026-02-16 A | RHD4ENSDSTL1SUB1000 | 100% |  |
| RHD4ENSDSWL1SUB4000 |  | Prepare and Submit Shop Drawings for Sewage Lift Station 1 - Z3 - Electrical Package for -SWL1-SUB | 11d | 2026-01-13 A | 2026-04-05 A | RHD4ENSDSTL1SUB4000 | 100% |  |
|  | 38 | **RHD4-02-002-Shop Drawing Approvals - APP** |  | 2025-12-04 | 2026-11-30 |  |  |  |
|  | 39 | **RHD4-02-002-Shop Drawing Approvals - APP-Z1** |  | 2025-12-21 | 2026-11-23 |  |  |  |
| RHD4ENSDZ1APPSW120 |  | Review and Approval of Shop Drawings for Sewage Network for SW-Z1-APP | 7d | 2025-12-21 A | 2026-04-07 A | RHD4ENSDZ1SUBSW120 | 100% |  |
| RHD4ENSDZ1APPPT130 |  | Review and Approval of Shop Drawings for Potable Water Network for PT-Z1-APP | 6d | 2025-12-28 A | 2026-08-10 A | RHD4ENSDZ1SUBPT130 | 100% |  |
| RHD4ENSDZ1APPIRR140 |  | Review and Approval of Shop Drawings for Irrigation Network for IRR-Z1-APP | 7d | 2026-01-04 A | 2026-04-30 A | RHD4ENSDZ1SUBIRR140 | 100% |  |
| RHD4ENSDZ1APPRD220 |  | Review and Approval of Shop Drawings for Road Works( KERBING AND PAVEMENT ) for RD-Z1-APP | 7d | 2026-01-04 A | 2026-05-31 A | RHD4ENSDZ1SUBRD220 SS | 100% |  |
| RHD4ENSDZ1APPCCTV210 |  | Review and Approval of Shop Drawings for Security Network for CCTV-Z1-APP | 7d | 2026-01-11 A | 2026-03-08 A | RHD4ENSDZ1SUBCCTV210 | 100% |  |
| RHD4ENSDZ1APPICT200 |  | Review and Approval of Shop Drawings for Information and Communication Technologies Network for ICT-Z1-APP | 7d | 2026-01-11 A | 2026-03-08 A | RHD4ENSDZ1SUBICT200 | 100% |  |
| RHD4ENSDZ1APPLV160 |  | Review and Approval of Shop Drawings for Low Voltage Network for LV-Z1-APP | 7d | 2026-01-11 A | 2026-03-11 A | RHD4ENSDZ1SUBLV160 | 100% |  |
| RHD4ENSDZ1APPSL170 |  | Review and Approval of Shop Drawings for Street Lighting Network for SL-Z1-APP | 7d | 2026-01-11 A | 2026-03-12 A | RHD4ENSDZ1SUBSL170 | 100% |  |
| RHD4ENSDZ1APPTC190 |  | Review and Approval of Shop Drawings for Telecommunications Network for TC-Z1-APP | 7d | 2026-01-11 A | 2026-04-06 A | RHD4ENSDZ1APPPT130, RHD4ENSDZ1APPSW120, RHD4ENSDZ1APPST110, RHD4ENSDZ1SUBTC190 | 100% |  |
| RHD4ENSDZ1APPEW100 |  | Review and Approval of Shop Drawings for Road Plans and Profile for EW-Z1-APP | 5d | 2026-01-12 A | 2026-02-14 A | RHD4ENSDZ1APPRD220, RHD4ENSDZ1SUBEW100, RHD4ENSDZ1APPRD220 FF | 100% |  |
| RHD4ENSDZ1APPST110 |  | Review and Approval of Shop Drawings for Storm Water Network for ST-Z1-APP | 7d | 2026-02-03 A | 2026-04-30 A | RHD4ENSDZ1SUBST110 | 100% |  |
| RHD4ENSDZ1APPMV150 |  | Review and Approval of Shop Drawings for Medium Voltage Network for MV-Z1-APP | 6d | 2026-11-17 | 2026-11-23 | RHD4GNPPSD1100, RHD4ENSDZ4SUBRD220, RHD4ENSDZ1SUBRD220, RHD4ENSDZ1APPIRR140, RHD4ENSDZ1SUBMV150 |  | -182.02d |
|  | 40 | **RHD4-02-002-Shop Drawing Approvals - APP-Z2** |  | 2025-12-30 | 2026-11-23 |  |  |  |
| RHD4ENSDZ2APPPT130 |  | Review and Approval of Shop Drawings for Potable Water Network for PT-Z2-APP | 6d | 2025-12-30 A | 2026-08-10 A | RHD4ENSDZ2SUBPT130 | 100% |  |
| RHD4ENSDZ2APPSW120 |  | Review and Approval of Shop Drawings for Sewage Network for SW-Z2-APP | 7d | 2025-12-30 A | 2026-04-07 A | RHD4ENSDZ2SUBSW120 | 100% |  |
| RHD4ENSDZ2APPRD220 |  | Review and Approval of Shop Drawings for Road Works( KERBING AND PAVEMENT ) for RD-Z2-APP | 7d | 2026-01-04 A | 2026-02-09 A | RHD4ENSDZ2SUBRD220 SS | 100% |  |
| RHD4ENSDZ2APPIRR140 |  | Review and Approval of Shop Drawings for Irrigation Network for IRR-Z2-APP | 7d | 2026-01-07 A | 2026-04-30 A | RHD4ENSDZ2SUBIRR140 | 100% |  |
| RHD4ENSDZ2APPTC190 |  | Review and Approval of Shop Drawings for Telecommunications Network for TC-Z2-APP | 7d | 2026-01-11 A | 2026-04-06 A | RHD4ENSDZ2SUBTC190 | 100% |  |
| RHD4ENSDZ2APPCCTV210 |  | Review and Approval of Shop Drawings for Security Network for CCTV-Z2-APP | 7d | 2026-01-12 A | 2026-03-10 A | RHD4ENSDZ2APPSW120, RHD4ENSDZ2SUBCCTV210 | 100% |  |
| RHD4ENSDZ2APPEW100 |  | Review and Approval of Shop Drawings for Road Plans and Profile for EW-Z2-APP | 5d | 2026-01-12 A | 2026-02-14 A | RHD4ENSDZ2APPRD220, RHD4ENSDZ2SUBEW100 SS, RHD4ENSDZ2APPST110 | 100% |  |
| RHD4ENSDZ2APPICT200 |  | Review and Approval of Shop Drawings for Information and Communication Technologies Network for ICT-Z2-APP | 7d | 2026-01-12 A | 2026-03-10 A | RHD4ENSDZ2APPPT130, RHD4ENSDZ2SUBICT200 | 100% |  |
| RHD4ENSDZ2APPLV160 |  | Review and Approval of Shop Drawings for Low Voltage Network for LV-Z2-APP | 7d | 2026-01-12 A | 2026-03-05 A | RHD4ENSDZ2SUBLV160 | 100% |  |
| RHD4ENSDZ2APPSL170 |  | Review and Approval of Shop Drawings for Street Lighting Network for SL-Z2-APP | 7d | 2026-01-12 A | 2026-03-08 A | RHD4ENSDZ2SUBSL170 | 100% |  |
| RHD4ENSDZ2APPST110 |  | Review and Approval of Shop Drawings for Storm Water Network for ST-Z2-APP | 7d | 2026-02-03 A | 2026-04-30 A | RHD4ENSDZ2SUBST110 | 100% |  |
| RHD4ENSDZ2APPMV150 |  | Review and Approval of Shop Drawings for Medium Voltage Network for MV-Z2-APP | 6d | 2026-11-17 | 2026-11-23 | RHD4GNPPSD1100, RHD4ENSDZ4SUBRD220, RHD4ENSDZ2SUBRD220, RHD4ENSDZ2APPIRR140, RHD4ENSDZ2SUBMV150 |  | -182.02d |
|  | 41 | **RHD4-02-002-Shop Drawing Approvals - APP-Z3** |  | 2025-12-23 | 2026-11-23 |  |  |  |

| ID | WBS | Task | Duration | Start | Finish | Predecessors | Complete | Total float |
| --- | --- | --- | --- | --- | --- | --- | --- | --- |
| RHD4ENSDZ3APPRD220 |  | Review and Approval of Shop Drawings for Road Works( KERBING AND PAVEMENT ) for RD-Z3-APP | 7d | 2025-12-23 A | 2026-02-09 A | RHD4ENSDZ3SUBRD220 | 100% |  |
| RHD4ENSDZ3APPPT130 |  | Review and Approval of Shop Drawings for Potable Water Network for PT-Z3-APP | 6d | 2025-12-28 A | 2026-08-10 A | RHD4ENSDZ3SUBPT130 | 100% |  |
| RHD4ENSDZ3APPSW120 |  | Review and Approval of Shop Drawings for Sewage Network for SW-Z3-APP | 7d | 2025-12-28 A | 2026-04-07 A | RHD4ENSDZ3SUBSW120 | 100% |  |
| RHD4ENSDZ3APPCCTV210 |  | Review and Approval of Shop Drawings for Security Network for CCTV-Z3-APP | 7d | 2025-12-30 A | 2026-03-10 A | RHD4ENSDZ3SUBCCTV210 | 100% |  |
| RHD4ENSDZ3APPICT200 |  | Review and Approval of Shop Drawings for Information and Communication Technologies Network for ICT-Z3-APP | 7d | 2025-12-30 A | 2026-03-10 A | RHD4ENSDZ3SUBICT200 | 100% |  |
| RHD4ENSDZ3APPLV160 |  | Review and Approval of Shop Drawings for Low Voltage Network for LV-Z3-APP | 7d | 2025-12-30 A | 2026-03-05 A | RHD4ENSDZ3SUBLV160 | 100% |  |
| RHD4ENSDZ3APPSL170 |  | Review and Approval of Shop Drawings for Street Lighting Network for SL-Z3-APP | 7d | 2025-12-30 A | 2026-03-08 A | RHD4ENSDZ3SUBSL170 | 100% |  |
| RHD4ENSDZ3APPTC190 |  | Review and Approval of Shop Drawings for Telecommunications Network for TC-Z3-APP | 7d | 2025-12-30 A | 2026-04-06 A | RHD4ENSDZ3SUBTC190 | 100% |  |
| RHD4ENSDZ3APPEW100 |  | Review and Approval of Shop Drawings for Road Plans and Profile for EW-Z3-APP | 5d | 2025-12-31 A | 2026-02-14 A | RHD4ENSDZ3APPRD220, RHD4ENSDZ3SUBEW100 | 100% |  |
| RHD4ENSDZ3APPIRR140 |  | Review and Approval of Shop Drawings for Irrigation Network for IRR-Z3-APP | 7d | 2026-01-04 A | 2026-04-30 A | RHD4ENSDZ3APPPT130, RHD4ENSDZ3SUBIRR140 | 100% |  |
| RHD4ENSDZ3APPST110 |  | Review and Approval of Shop Drawings for Storm Water Network for ST-Z3-APP | 7d | 2026-02-03 A | 2026-04-30 A | RHD4ENSDZ3SUBST110 | 100% |  |
| RHD4ENSDZ3APPMV150 |  | Review and Approval of Shop Drawings for Medium Voltage Network for MV-Z3-APP | 6d | 2026-11-17 | 2026-11-23 | RHD4ENSDZ3APPEW100, RHD4ENSDZ3APPCCTV210, RHD4ENSDZ3APPICT200, RHD4ENSDZ3APPTC190, RHD4ENSDZ3APPSL170, RHD4ENSDZ3APPLV160, RHD4ENSDZ3APPSW120, RHD4ENSDZ3APPST110, RHD4ENSDZ3SUBMV150 |  | -182.02d |
|  | 42 | **RHD4-02-002-Shop Drawing Approvals - APP-Z4** |  | 2025-12-14 | 2026-11-23 |  |  |  |
| RHD4ENSDZ4APPEW100 |  | Review and Approval of Shop Drawings for Road Plans and Profile for EW-Z4-APP | 5d | 2025-12-14 A | 2026-02-14 A | RHD4ENSDZ4SUBEW100 SS | 100% |  |
| RHD4ENSDZ4APPPT130 |  | Review and Approval of Shop Drawings for Potable Water Network for PT-Z4-APP | 6d | 2025-12-21 A | 2026-08-10 A | RHD4ENSDZ4SUBPT130 | 100% |  |
| RHD4ENSDZ4APPSW120 |  | Review and Approval of Shop Drawings for Sewage Network for SW-Z4-APP | 7d | 2025-12-22 A | 2026-04-07 A | RHD4ENSDZ4SUBSW120 | 100% |  |
| RHD4ENSDZ4APPRD220 |  | Review and Approval of Shop Drawings for Road Works( KERBING AND PAVEMENT ) for RD-Z4-APP | 7d | 2025-12-24 A | 2026-02-09 A | RHD4ENSDZ4SUBRD220 SS | 100% |  |
| RHD4ENSDZ4APPIRR140 |  | Review and Approval of Shop Drawings for Irrigation Network for IRR-Z4-APP | 7d | 2025-12-28 A | 2026-04-30 A | RHD4ENSDZ4SUBIRR140 | 100% |  |
| RHD4ENSDZ4APPTC190 |  | Review and Approval of Shop Drawings for Telecommunications Network for TC-Z4-APP | 7d | 2025-12-31 A | 2026-04-06 A | RHD4ENSDZ4SUBTC190 | 100% |  |
| RHD4ENSDZ4APPCCTV210 |  | Review and Approval of Shop Drawings for Security Network for CCTV-Z4-APP | 7d | 2026-01-01 A | 2026-03-10 A | RHD4ENSDZ4SUBCCTV210 | 100% |  |
| RHD4ENSDZ4APPICT200 |  | Review and Approval of Shop Drawings for Information and Communication Technologies Network for ICT-Z4-APP | 7d | 2026-01-01 A | 2026-03-10 A | RHD4ENSDZ4SUBICT200 | 100% |  |
| RHD4ENSDZ4APPLV160 |  | Review and Approval of Shop Drawings for Low Voltage Network for LV-Z4-APP | 7d | 2026-01-01 A | 2026-03-05 A | RHD4ENSDZ4SUBLV160 | 100% |  |
| RHD4ENSDZ4APPSL170 |  | Review and Approval of Shop Drawings for Street Lighting Network for SL-Z4-APP | 7d | 2026-01-01 A | 2026-03-08 A | RHD4ENSDZ4SUBSL170 | 100% |  |
| RHD4ENSDZ4APPST110 |  | Review and Approval of Shop Drawings for Storm Water Network for ST-Z4-APP | 7d | 2026-02-03 A | 2026-04-30 A | RHD4ENSDZ4SUBST110 | 100% |  |
| RHD4ENSDZ4APPMV150 |  | Review and Approval of Shop Drawings for Medium Voltage Network for MV-Z4-APP | 6d | 2026-11-17 | 2026-11-23 | RHD4ENSDZ4APPRD220, RHD4ENSDZ4APPSW120, RHD4ENSDZ4APPPT130, RHD4ENSDZ4APPST110, RHD4ENSDZ4SUBMV150 |  | -182.02d |
|  | 43 | **RHD4-02-002-Shop Drawing Approvals - APP-Z5** |  | 2025-12-15 | 2026-11-23 |  |  |  |
| RHD4ENSDZ5APPRD220 |  | Review and Approval of Shop Drawings for Road Works( KERBING AND PAVEMENT ) for RD-Z5-APP | 7d | 2025-12-15 A | 2026-02-09 A | RHD4ENSDZ5SUBRD220 SS | 100% |  |
| RHD4ENSDZ5APPEW100 |  | Review and Approval of Shop Drawings for Road Plans and Profile for EW-Z5-APP | 5d | 2025-12-21 A | 2026-02-14 A | RHD4ENSDZ5SUBEW100 | 100% |  |
| RHD4ENSDZ5APPPT130 |  | Review and Approval of Shop Drawings for Potable Water Network for PT-Z5-APP | 6d | 2025-12-21 A | 2026-08-10 A | RHD4ENSDZ5SUBPT130 | 100% |  |
| RHD4ENSDZ5APPSW120 |  | Review and Approval of Shop Drawings for Sewage Network for SW-Z5-APP | 7d | 2025-12-22 A | 2026-04-07 A | RHD4ENSDZ5SUBSW120 | 100% |  |
| RHD4ENSDZ5APPTC190 |  | Review and Approval of Shop Drawings for Telecommunications Network for TC-Z5-APP | 7d | 2025-12-22 A | 2026-04-06 A | RHD4ENSDZ5SUBTC190 | 100% |  |
| RHD4ENSDZ5APPCCTV210 |  | Review and Approval of Shop Drawings for Security Network for CCTV-Z5-APP | 7d | 2025-12-23 A | 2026-03-10 A | RHD4ENSDZ5SUBCCTV210 | 100% |  |
| RHD4ENSDZ5APPICT200 |  | Review and Approval of Shop Drawings for Information and Communication Technologies Network for ICT-Z5-APP | 7d | 2025-12-23 A | 2026-03-10 A | RHD4ENSDZ5SUBICT200 | 100% |  |
| RHD4ENSDZ5APPLV160 |  | Review and Approval of Shop Drawings for Low Voltage Network for LV-Z5-APP | 7d | 2025-12-23 A | 2026-03-05 A | RHD4ENSDZ5SUBLV160 | 100% |  |
| RHD4ENSDZ5APPSL170 |  | Review and Approval of Shop Drawings for Street Lighting Network for SL-Z5-APP | 7d | 2025-12-23 A | 2026-03-08 A | RHD4ENSDZ5SUBSL170 | 100% |  |
| RHD4ENSDZ5APPIRR140 |  | Review and Approval of Shop Drawings for Irrigation Network for IRR-Z5-APP | 7d | 2025-12-28 A | 2026-04-30 A | RHD4ENSDZ5APPPT130, RHD4ENSDZ5SUBIRR140 | 100% |  |
| RHD4ENSDZ5APPST110 |  | Review and Approval of Shop Drawings for Storm Water Network for ST-Z5-APP | 7d | 2026-02-03 A | 2026-04-30 A | RHD4ENSDZ5SUBST110 | 100% |  |
| RHD4ENSDZ5APPMV150 |  | Review and Approval of Shop Drawings for Medium Voltage Network for MV-Z5-APP | 6d | 2026-11-17 | 2026-11-23 | RHD4GNPPSD1100, RHD4ENSDZ6SUBRD220, RHD4ENSDZ5SUBRD220, RHD4ENSDZ5APPST110, RHD4ENSDZ5APPSW120, RHD4ENSDZ5APPTC190, RHD4ENSDZ5APPLV160, RHD4ENSDZ5APPSL170, RHD4ENSDZ5APPICT200, RHD4ENSDZ5APPCCTV210, RHD4ENSDZ5SUBMV150 |  | -188.02d |
|  | 44 | **RHD4-02-002-Shop Drawing Approvals - APP-Z6** |  | 2025-12-04 | 2026-11-23 |  |  |  |
| RHD4ENSDZ6APPRD220 |  | Review and Approval of Shop Drawings for Road Works( KERBING AND PAVEMENT ) for RD-Z6-APP | 7d | 2025-12-04 A | 2026-02-09 A | RHD4ENSDZ6SUBRD220 SS | 100% |  |
| RHD4ENSDZ6APPTC190 |  | Review and Approval of Shop Drawings for Telecommunications Network for TC-Z6-APP | 7d | 2025-12-11 A | 2026-04-06 A | RHD4ENSDZ6SUBTC190 | 100% |  |
| RHD4ENSDZ6APPCCTV210 |  | Review and Approval of Shop Drawings for Security Network for CCTV-Z6-APP | 7d | 2025-12-13 A | 2026-03-10 A | RHD4ENSDZ6SUBCCTV210 | 100% |  |
| RHD4ENSDZ6APPICT200 |  | Review and Approval of Shop Drawings for Information and Communication Technologies Network for ICT-Z6-APP | 7d | 2025-12-13 A | 2026-03-10 A | RHD4ENSDZ6SUBICT200 | 100% |  |
| RHD4ENSDZ6APPLV160 |  | Review and Approval of Shop Drawings for Low Voltage Network for LV-Z6-APP | 7d | 2025-12-13 A | 2026-03-05 A | RHD4ENSDZ6SUBLV160 | 100% |  |
| RHD4ENSDZ6APPSL170 |  | Review and Approval of Shop Drawings for Street Lighting Network for SL-Z6-APP | 7d | 2025-12-13 A | 2026-03-08 A | RHD4ENSDZ6SUBSL170 | 100% |  |
| RHD4ENSDZ6APPPT130 |  | Review and Approval of Shop Drawings for Potable Water Network for PT-Z6-APP | 7d | 2025-12-21 A | 2026-08-10 A | RHD4ENSDZ6SUBPT130 | 100% |  |
| RHD4ENSDZ6APPEW100 |  | Review and Approval of Shop Drawings for Road Plans and Profile for EW-Z6-APP | 7d | 2025-12-22 A | 2026-02-14 A | RHD4ENSDZ6APPRD220, RHD4ENSDZ6SUBEW100 | 100% |  |
| RHD4ENSDZ6APPSW120 |  | Review and Approval of Shop Drawings for Sewage Network for SW-Z6-APP | 7d | 2025-12-22 A | 2026-04-07 A | RHD4ENSDZ6SUBSW120 | 100% |  |
| RHD4ENSDZ6APPIRR140 |  | Review and Approval of Shop Drawings for Irrigation Network for IRR-Z6-APP | 7d | 2025-12-28 A | 2026-04-30 A | RHD4ENSDZ6SUBIRR140 | 100% |  |
| RHD4ENSDZ6APPST110 |  | Review and Approval of Shop Drawings for Storm Water Network for ST-Z6-APP | 7d | 2026-02-03 A | 2026-04-30 A | RHD4ENSDZ6SUBST110 | 100% |  |
| RHD4ENSDZ6APPMV150 |  | Review and Approval of Shop Drawings for Medium Voltage Network for MV-Z6-APP | 6d | 2026-11-17 | 2026-11-23 | RHD4ENSDZ6APPSW120, RHD4ENSDZ6APPPT130, RHD4ENSDZ6APPST110, RHD4ENSDZ6SUBMV150 |  | -182.02d |
|  | 45 | **RHD4-02-002-Shop Drawing Approvals - APP-Z7** |  | 2025-12-15 | 2026-11-23 |  |  |  |
| RHD4ENSDZ7APPRD220 |  | Review and Approval of Shop Drawings for Road Works( KERBING AND PAVEMENT ) for RD-Z7-APP | 7d | 2025-12-15 A | 2026-02-09 A | RHD4ENSDZ7SUBRD220 SS | 100% |  |
| RHD4ENSDZ7APPPT130 |  | Review and Approval of Shop Drawings for Potable Water Network for PT-Z7-APP | 7d | 2025-12-21 A | 2026-08-10 A | RHD4ENSDZ7SUBPT130 | 100% |  |
| RHD4ENSDZ7APPEW100 |  | Review and Approval of Shop Drawings for Road Plans and Profile for EW-Z7-APP | 7d | 2025-12-22 A | 2026-02-14 A | RHD4ENSDZ7SUBEW100 | 100% |  |
| RHD4ENSDZ7APPSW120 |  | Review and Approval of Shop Drawings for Sewage Network for SW-Z7-APP | 7d | 2025-12-22 A | 2026-04-07 A | RHD4ENSDZ7SUBSW120 | 100% |  |
| RHD4ENSDZ7APPTC190 |  | Review and Approval of Shop Drawings for Telecommunications Network for TC-Z7-APP | 7d | 2025-12-22 A | 2026-04-06 A | RHD4ENSDZ7SUBTC190 | 100% |  |
| RHD4ENSDZ7APPCCTV210 |  | Review and Approval of Shop Drawings for Security Network for CCTV-Z7-APP | 7d | 2025-12-23 A | 2026-03-10 A | RHD4ENSDZ7SUBCCTV210 | 100% |  |
| RHD4ENSDZ7APPICT200 |  | Review and Approval of Shop Drawings for Information and Communication Technologies Network for ICT-Z7-APP | 7d | 2025-12-23 A | 2026-03-10 A | RHD4ENSDZ7SUBICT200 | 100% |  |
| RHD4ENSDZ7APPLV160 |  | Review and Approval of Shop Drawings for Low Voltage Network for LV-Z7-APP | 7d | 2025-12-23 A | 2026-03-05 A | RHD4ENSDZ7SUBLV160 | 100% |  |
| RHD4ENSDZ7APPSL170 |  | Review and Approval of Shop Drawings for Street Lighting Network for SL-Z7-APP | 7d | 2025-12-23 A | 2026-03-08 A | RHD4ENSDZ7SUBSL170 | 100% |  |
| RHD4ENSDZ7APPIRR140 |  | Review and Approval of Shop Drawings for Irrigation Network for IRR-Z7-APP | 7d | 2025-12-28 A | 2026-04-30 A | RHD4ENSDZ7SUBIRR140 | 100% |  |
| RHD4ENSDZ7APPST110 |  | Review and Approval of Shop Drawings for Storm Water Network for ST-Z7-APP | 7d | 2026-02-03 A | 2026-04-30 A | RHD4ENSDZ7SUBST110 | 100% |  |
| RHD4ENSDZ7APPMV150 |  | Review and Approval of Shop Drawings for Medium Voltage Network for MV-Z7-APP | 6d | 2026-11-17 | 2026-11-23 | RHD4GNPPSD1100, RHD4ENSDZ6SUBRD220, RHD4ENSDZ7SUBRD220, RHD4ENSDZ7APPST110, RHD4ENSDZ7APPPT130, RHD4ENSDZ7APPSW120, RHD4ENSDZ7APPTC190, RHD4ENSDZ7APPLV160, RHD4ENSDZ7APPSL170, RHD4ENSDZ7APPICT200, RHD4ENSDZ7APPCCTV210, RHD4ENSDZ7SUBMV150 |  | -182.02d |
|  | 46 | **RHD4-02-002-Shop Drawing Approvals - APP-Z8** |  | 2025-12-29 | 2026-11-30 |  |  |  |
| RHD4ENSDZ8APPPT130 |  | Review and Approval of Shop Drawings for Potable Water Network for PT-Z8-APP | 7d | 2025-12-29 A | 2026-08-10 A | RHD4ENSDZ8SUBPT130 | 100% |  |
| RHD4ENSDZ8APPSW120 |  | Review and Approval of Shop Drawings for Sewage Network for SW-Z8-APP | 7d | 2025-12-30 A | 2026-04-07 A | RHD4ENSDZ8SUBSW120 | 100% |  |
| RHD4ENSDZ8APPRD220 |  | Review and Approval of Shop Drawings for Road Works( KERBING AND PAVEMENT ) for RD-Z8-APP | 7d | 2025-12-31 A | 2026-02-09 A | RHD4ENSDZ8SUBRD220 | 100% |  |
| RHD4ENSDZ8APPIRR140 |  | Review and Approval of Shop Drawings for Irrigation Network for IRR-Z8-APP | 7d | 2026-01-05 A | 2026-04-30 A | RHD4ENSDZ7APPIRR140, RHD4ENSDZ8SUBIRR140 | 100% |  |
| RHD4ENSDZ8APPTC190 |  | Review and Approval of Shop Drawings for Telecommunications Network for TC-Z8-APP | 7d | 2026-01-07 A | 2026-04-06 A | RHD4ENSDZ8SUBTC190 | 100% |  |

| ID | WBS | Task | Duration | Start | Finish | Predecessors | Complete | Total float |
| --- | --- | --- | --- | --- | --- | --- | --- | --- |
| RHD4ENSDZ8APPEW100 |  | Review and Approval of Shop Drawings for Road Plans and Profile for EW-Z8-APP | 7d | 2026-01-08 A | 2026-02-14 A | RHD4ENSDZ8APPRD220, RHD4ENSDZ8APPSW120, RHD4ENSDZ8SUBEW100 | 100% |  |
| RHD4ENSDZ8APPICT200 |  | Review and Approval of Shop Drawings for Information and Communication Technologies Network for ICT-Z8-APP | 7d | 2026-01-08 A | 2026-03-10 A | RHD4ENSDZ5APPIRR140, RHD4ENSDZ4APPTC190, RHD4ENSDZ8SUBICT200 | 100% |  |
| RHD4ENSDZ8APPLV160 |  | Review and Approval of Shop Drawings for Low Voltage Network for LV-Z8-APP | 7d | 2026-01-08 A | 2026-03-05 A | RHD4ENSDZ6APPIRR140, RHD4ENSDZ4APPIRR140, RHD4ENSDZ8SUBLV160 | 100% |  |
| RHD4ENSDZ8APPSL170 |  | Review and Approval of Shop Drawings for Street Lighting Network for SL-Z8-APP | 7d | 2026-01-08 A | 2026-03-08 A | RHD4ENSDZ8SUBSL170 | 100% |  |
| RHD4ENSDZ8APPCCTV210 |  | Review and Approval of Shop Drawings for Security Network for CCTV-Z8-APP | 7d | 2026-01-12 A | 2026-03-10 A | RHD4ENSDZ7APPMV150, RHD4ENSDZ6APPMV150, RHD4ENSDZ4APPMV150, RHD4ENSDZ4APPSL170, RHD4ENSDZ4APPLV160, RHD4ENSDZ3APPIRR140, RHD4ENSDZ8SUBCCTV210 | 100% |  |
| RHD4ENSDZ8APPST110 |  | Review and Approval of Shop Drawings for Storm Water Network for ST-Z8-APP | 7d | 2026-02-03 A | 2026-04-30 A | RHD4ENSDZ8SUBST110 | 100% |  |
| RHD4ENSDZ8APPMV150 |  | Review and Approval of Shop Drawings for Medium Voltage Network for MV-Z8-APP | 6d | 2026-11-24 | 2026-11-30 | RHD4ENSDZ8APPPT130, RHD4ENSDZ8APPST110, RHD4ENSDZ5APPMV150, RHD4ENSDZ4APPCCTV210, RHD4ENSDZ4APPICT200, RHD4ENSDZ8SUBMV150 |  | -188.02d |
|  | 47 | **RHD4-02-002-Shop Drawing Approvals - APP-Z9** |  | 2025-12-15 | 2026-11-23 |  |  |  |
| RHD4ENSDZ9APPRD220 |  | Review and Approval of Shop Drawings for Road Works( KERBING AND PAVEMENT ) for RD-Z9-APP | 7d | 2025-12-15 A | 2026-02-09 A | RHD4ENSDZ9SUBRD220 SS | 100% |  |
| RHD4ENSDZ9APPPT130 |  | Review and Approval of Shop Drawings for Potable Water Network for PT-Z9-APP | 7d | 2025-12-21 A | 2026-08-10 A | RHD4ENSDZ9SUBPT130 | 100% |  |
| RHD4ENSDZ9APPEW100 |  | Review and Approval of Shop Drawings for Road Plans and Profile for EW-Z9-APP | 7d | 2025-12-22 A | 2026-02-14 A | RHD4ENSDZ9SUBEW100 | 100% |  |
| RHD4ENSDZ9APPSW120 |  | Review and Approval of Shop Drawings for Sewage Network for SW-Z9-APP | 7d | 2025-12-22 A | 2026-04-07 A | RHD4ENSDZ9SUBSW120 | 100% |  |
| RHD4ENSDZ9APPTC190 |  | Review and Approval of Shop Drawings for Telecommunications Network for TC-Z9-APP | 7d | 2025-12-22 A | 2026-04-06 A | RHD4ENSDZ9SUBTC190 | 100% |  |
| RHD4ENSDZ9APPCCTV210 |  | Review and Approval of Shop Drawings for Security Network for CCTV-Z9-APP | 7d | 2025-12-23 A | 2026-03-10 A | RHD4ENSDZ9SUBCCTV210 | 100% |  |
| RHD4ENSDZ9APPICT200 |  | Review and Approval of Shop Drawings for Information and Communication Technologies Network for ICT-Z9-APP | 7d | 2025-12-23 A | 2026-03-10 A | RHD4ENSDZ9SUBICT200 | 100% |  |
| RHD4ENSDZ9APPLV160 |  | Review and Approval of Shop Drawings for Low Voltage Network for LV-Z9-APP | 7d | 2025-12-23 A | 2026-03-05 A | RHD4ENSDZ9SUBLV160 | 100% |  |
| RHD4ENSDZ9APPSL170 |  | Review and Approval of Shop Drawings for Street Lighting Network for SL-Z9-APP | 7d | 2025-12-23 A | 2026-03-08 A | RHD4ENSDZ9SUBSL170 | 100% |  |
| RHD4ENSDZ9APPIRR140 |  | Review and Approval of Shop Drawings for Irrigation Network for IRR-Z9-APP | 7d | 2025-12-28 A | 2026-04-30 A | RHD4ENSDZ9SUBIRR140 | 100% |  |
| RHD4ENSDZ9APPST110 |  | Review and Approval of Shop Drawings for Storm Water Network for ST-Z9-APP | 7d | 2026-02-03 A | 2026-04-30 A | RHD4ENSDZ9SUBST110 | 100% |  |
| RHD4ENSDZ9APPMV150 |  | Review and Approval of Shop Drawings for Medium Voltage Network for MV-Z9-APP | 6d | 2026-11-17 | 2026-11-23 | RHD4GNPPSD1100, RHD4ENSDZ6SUBRD220, RHD4ENSDZ9SUBRD220, RHD4ENSDZ9APPLV160, RHD4ENSDZ9APPTC190, RHD4ENSDZ9APPSW120, RHD4ENSDZ9APPPT130, RHD4ENSDZ9APPST110, RHD4ENSDZ9SUBMV150 |  | -182.02d |
|  | 48 | **RHD4-02-002-Shop Drawing Approvals - APP-Tunne 1 - TUN1** |  | 2025-12-15 | 2026-08-03 |  |  |  |
| RHD4ENTUN1APPSTC1100 |  | Review and Approval of Shop Drawings for TUNNEL 1 (SECTIONS) -Z5 for STC-TUN1-APP(Completed) | 7d | 2025-12-15 A | 2026-08-03 A | RHD4ENSDTUN1SUB1100 SS | 100% |  |
| RHD4ENTUN1APPSTC1200 |  | Review and Approval of Shop Drawings for TUNNEL 1 (BBS) -Z5 for STC-TUN1-APP(Completed) | 7d | 2025-12-15 A | 2026-08-03 A | RHD4ENSDTUN1SUB1200 SS | 100% |  |
| RHD4ENTUN1APPSTC1000 |  | Review and Approval of Shop Drawings for TUNNEL 1 (PLANS) -Z5 for STC-TUN1-APP | 7d | 2025-12-28 A | 2026-03-30 A | RHD4ENSDZ9APPICT200, RHD4ENSDTUN1SUB1000 | 100% |  |
|  | 50 | **RHD4-02-002-Shop Drawing Approvals - APP-Sewage Lift Station 1 - SWL1** |  | 2025-12-15 | 2026-08-03 |  |  |  |
| RHD4ENSWL1APPARC1100 |  | Review and Approval of Shop Drawings for Sewage Lift Station 1 - Z3 - Architecture Package for ARC-SWL1-APP(Completed) | 7d | 2025-12-15 A | 2026-08-03 A | RHD4ENSDSWL1SUB2000 SS | 100% |  |
| RHD4ENSWL1APPMEC1200 |  | Review and Approval of Shop Drawings for Sewage Lift Station 1 - Z3 - Mechanical Package for MEC-SWL1-APP(Completed) | 7d | 2025-12-15 A | 2026-08-03 A | RHD4ENSDSWL1SUB3000 SS | 100% |  |
| RHD4ENSWL1APPSTC1000 |  | Review and Approval of Shop Drawings for Sewage Lift Station 1 - Z3 - Structure Package for STC-SWL1-APP | 7d | 2026-01-15 A | 2026-03-31 A | RHD4ENSDZ9APPMV150, RHD4ENSDZ9APPIRR140, RHD4ENSDZ9APPCCTV210, RHD4ENSDZ9APPSL170, RHD4ENSDZ8APPTC190, RHD4ENSDZ8APPIRR140, RHD4ENSDSWL1SUB1000 | 100% |  |
| RHD4ENSWL1APPELE1300 |  | Review and Approval of Shop Drawings for Sewage Lift Station 1 - Z3 - Electrical Package for ELE-SWL1-APP | 3d | 2026-01-26 A | 2026-04-07 A | RHD4ENSWL1APPSTC1000, RHD4ENTUN1APPSTC1000, RHD4ENSDZ8APPMV150, RHD4ENSDZ8APPCCTV210, RHD4ENSDZ8APPICT200, RHD4ENSDZ8APPSL170, RHD4ENSDZ8APPLV160, RHD4ENSDZ3APPMV150, RHD4ENSDZ2APPMV150, RHD4ENSDZ2APPCCTV210, RHD4ENSDZ2APPICT200, RHD4ENSDZ2APPSL170, RHD4ENSDZ2APPLV160, RHD4ENSDZ2APPTC190, RHD4ENSDZ1APPMV150, RHD4ENSDZ1APPEW100, RHD4ENSDZ1APPCCTV210, RHD4ENSDZ1APPICT200, RHD4ENSDZ1APPTC190, RHD4ENSDZ1APPSL170, RHD4ENSDZ1APPLV160, RHD4ENSDSWL1SUB4000 | 100% |  |
|  | 52 | **RHD4-02-002-Shop Drawing Approvals - APP-Storm Lift Station 1 - STL1** |  | 2025-12-30 | 2026-08-03 |  |  |  |
| RHD4ENSTL1APPSTC1000 |  | Review and Approval of Shop Drawings for Storm Lift Station 1 - Z5 - Structure Package for STC-STL1-APP | 7d | 2025-12-30 A | 2026-03-25 A | RHD4ENSDSTL1SUB1000 | 100% |  |
| RHD4ENSTL1APPARC1100 |  | Review and Approval of Shop Drawings for Storm Lift Station 1 - Z5 - Architecture Package for ARC-STL1-APP(Completed) | 7d | 2026-02-14 A | 2026-08-03 A | RHD4ENSDSTL1SUB2000 SS | 100% |  |
| RHD4ENSTL1APPMEC1200 |  | Review and Approval of Shop Drawings for Storm Lift Station 1 - Z5 - Mechanical Package for MEC-STL1-APP(Completed) | 7d | 2026-03-15 A | 2026-08-03 A | RHD4ENSDSTL1SUB3000 SS | 100% |  |
| RHD4ENSTL1APPELE1300 |  | Review and Approval of Shop Drawings for Storm Lift Station 1 - Z5 - Electrical Package for ELE-STL1-APP | 3d | 2026-04-05 A | 2026-04-07 A | RHD4ENSTL1APPSTC1000, RHD4ENSDSTL1SUB4000 | 100% |  |
|  | 54 | **RHD4-02-002-Prequalification and Material - MAR** |  | 2025-12-10 | 2026-12-07 |  |  |  |
|  | 55 | **RHD4-02-002-Submittals of Material and Prequalifications - SUB** |  | 2025-12-10 | 2026-11-30 |  |  |  |
|  | 1 | **RHD4-02-002-Submittals of Material and Prequalifications - SUB-Earth works Material - EW** |  | 2026-01-10 | 2026-01-15 |  |  |  |
| RHD4ENMARSUBEW100 |  | Prepare Material Submittal for Earth work Materials - MAR-EW | 6d | 2026-01-10 A | 2026-01-15 A | RHD4ENSDSTL1SUB4000, RHD4GNPPPMP1100, RHD4GNPPORG1100, RHD4GNPPLOG1100, RHD4GNPPHSE1100 | 100% |  |
|  | 56 | **RHD4-02-002-Submittals of Material and Prequalifications - SUB-Storm Network - ST** |  | 2025-12-10 | 2026-04-20 |  |  |  |
| RHD4ENMARSUBST100 |  | Prepare Material Submittal for GRP pipes - MAR-ST | 6d | 2025-12-10 A | 2026-02-02 A | RHD4ENMSEW2000, RHD4ENSDZ6SUBRD220, RHD4GNMOB1000, RHD4ENMSRD1000 | 100% |  |
| RHD4ENMARSUBST200 |  | Prepare Material Submittal for UPVC pipes - MAR-ST | 7d | 2025-12-10 A | 2026-01-28 A | RHD4ENMARSUBST100 SS | 100% |  |
| RHD4ENMARSUBST400 |  | Prepare Material Submittal for Catch basin - MAR-ST | 7d | 2025-12-17 A | 2026-03-18 A | RHD4ENMARSUBST200 | 100% |  |
| RHD4ENMARSUBST300 |  | Prepare Material Submittal for HDPE pipes - MAR-ST | 7d | 2025-12-24 A | 2026-02-02 A | RHD4ENMARSUBST400 | 100% |  |
| RHD4ENMARSUBST700 |  | Prepare Material Submittal for Precast Concrete - MAR-ST | 7d | 2026-01-07 A | 2026-03-26 A | RHD4ENMSASPH1000 | 100% |  |
| RHD4ENMARSUBST800 |  | Prepare Material Submittal for Metal Works (Stairs - Manhole Covers) - MAR-ST | 4d | 2026-02-03 A | 2026-02-06 A | RHD4ENMARSUBST700 | 100% |  |
| RHD4ENMARSUBST500 |  | Prepare Material Submittal for Grouted Riprap - MAR-ST | 3d | 2026-02-07 A | 2026-02-09 A | RHD4ENMARSUBST300 | 100% |  |
| RHD4ENMARSUBST600 |  | Prepare Material Submittal for Tensile reinforcement steel - MAR-ST | 6d | 2026-04-14 A | 2026-04-20 A | RHD4ENMARSUBST500 SS | 100% |  |
|  | 57 | **RHD4-02-002-Submittals of Material and Prequalifications - SUB-Sewage Network - SW** |  | 2025-12-17 | 2026-03-26 |  |  |  |
| RHD4ENMARSUBSW200 |  | Prepare Material Submittal for GRP pipes - MAR-SW | 6d | 2025-12-17 A | 2026-02-02 A | RHD4ENMARSUBST100 | 100% |  |
| RHD4ENMARSUBSW100 |  | Prepare Material Submittal for UPVC pipes - MAR-SW | 7d | 2025-12-24 A | 2026-01-28 A | RHD4ENMARSUBSW200, RHD4GNPPBL1100, RHD4GNPPLOG1100 | 100% |  |
| RHD4ENMARSUBSW300 |  | Prepare Material Submittal for Valves - MAR-SW | 6d | 2025-12-24 A | 2026-01-17 A | RHD4ENMARSUBSW200 | 100% |  |
| RHD4ENMARSUBSW400 |  | Prepare Material Submittal for Precast Concrete - MAR-SW | 6d | 2025-12-31 A | 2026-03-26 A | RHD4ENMARSUBSW300 | 100% |  |
| RHD4ENMARSUBSW600 |  | Prepare Material Submittal for HDPE pipes - MAR-SW | 6d | 2026-01-07 A | 2026-02-02 A | RHD4ENMARSUBSW400 | 100% |  |
| RHD4ENMARSUBSW500 |  | Prepare Material Submittal for Metal Works (Stairs - Manhole Covers) - MAR-SW | 7d | 2026-01-13 A | 2026-02-09 A | RHD4ENMARSUBSW400 | 100% |  |
|  | 58 | **RHD4-02-002-Submittals of Material and Prequalifications - SUB-Potable Water Network - PT** |  | 2025-12-16 | 2026-10-07 |  |  |  |
| RHD4ENMARSUBPT300 |  | Prepare Material Submittal for Fire Hydrants - MAR-PT | 6d | 2025-12-16 A | 2026-01-17 A | RHD4GNMOB1000 | 100% |  |
| RHD4ENMARSUBPT400 |  | Prepare Material Submittal for Precast Concrete - MAR-PT | 6d | 2025-12-23 A | 2026-03-26 A | RHD4ENMARSUBPT300 | 100% |  |
| RHD4ENMARSUBPT600 |  | Prepare Material Submittal for Metal Works (Chamber's Covers) - MAR-PT(Completed) | 6d | 2025-12-23 A | 2026-08-03 A | RHD4ENMARSUBPT400 SS | 100% |  |
| RHD4ENMARSUBPT100 |  | Prepare Material Submittal for HDPE pipes - MAR-PT | 6d | 2025-12-24 A | 2026-02-02 A | RHD4ENMARSUBST300 SS | 100% |  |
| RHD4ENMARSUBPT200 |  | Prepare Material Submittal for Valves - MAR-PT | 6d | 2025-12-31 A | 2026-02-11 A | RHD4ENMARSUBPT100 | 100% |  |
| RHD4ENMARSUBPT500 |  | Prepare Material Submittal for Stem and Surface box - MAR-PT | 6d | 2026-10-01 A | 2026-10-07 A | RHD4GNPPMAT1100 SS, RHD4ENMARSUBPT200 SS | 100% |  |
|  | 59 | **RHD4-02-002-Submittals of Material and Prequalifications - SUB-Irrigation Network - IRR** |  | 2025-12-16 | 2026-08-03 |  |  |  |
| RHD4ENMARSUBIRR300 |  | Prepare Material Submittal for Precast Concrete - MAR-IRR | 6d | 2025-12-16 A | 2026-03-26 A | RHD4GNMOB1200 | 100% |  |
| RHD4ENMARSUBIRR500 |  | Prepare Material Submittal for Metal Works (Chamber's Covers) - MAR-IRR(Completed) | 7d | 2025-12-23 A | 2026-08-03 A | RHD4ENMARSUBIRR300 | 100% |  |
| RHD4ENMARSUBIRR100 |  | Prepare Material Submittal for HDPE pipes - MAR-IRR | 7d | 2025-12-24 A | 2026-02-02 A | RHD4ENMARSUBPT100 SS | 100% |  |
| RHD4ENMARSUBIRR200 |  | Prepare Material Submittal for Valves - MAR-IRR | 7d | 2025-12-31 A | 2026-02-11 A | RHD4ENMARSUBIRR100 | 100% |  |
| RHD4ENMARSUBIRR400 |  | Prepare Material Submittal for Stem and Surface box - MAR-IRR | 6d | 2026-02-07 A | 2026-02-12 A | RHD4GNPPMAT1100, RHD4ENMARSUBIRR200 SS | 100% |  |
|  | 60 | **RHD4-02-002-Submittals of Material and Prequalifications - SUB-Medium Voltage - MV** |  | 2025-12-16 | 2026-11-23 |  |  |  |
| RHD4ENMARSUBMV100 |  | Prepare Material Submittal for UPVC Pipes for Duct Banks - MAR-MV | 7d | 2025-12-16 A | 2026-01-28 A | RHD4GNMOB1000 | 100% |  |
| RHD4ENMARSUBMV600 |  | Prepare Material Submittal for Unit Substations - MAR-MV | 6d | 2026-11-10 | 2026-11-16 | RHD4GNPPMAT1100, RHD4ENMARSUBMV100 |  | -192d |

| ID | WBS | Task | Duration | Start | Finish | Predecessors | Complete | Total float |
| --- | --- | --- | --- | --- | --- | --- | --- | --- |
| RHD4ENMARSUBMV700 |  | Prepare Material Submittal for Ring Main Unit (RMU) - MAR-MV | 6d | 2026-11-10 | 2026-11-16 | RHD4GNPPMAT1100, RHD4ENMARSUBMV600 SS |  | -192d |
| RHD4ENMARSUBMV200 |  | Prepare Material Submittal for Medium Voltage Cable 3Cx500 mm2 - MAR-MV | 6d | 2026-11-17 | 2026-11-23 | RHD4GNPPMAT1100, RHD4ENMARSUBMV700 |  | -192d |
| RHD4ENMARSUBMV300 |  | Prepare Material Submittal for Medium Voltage Cable 3Cx50 mm2 - MAR-MV | 6d | 2026-11-17 | 2026-11-23 | RHD4GNPPMAT1100, RHD4ENMARSUBMV200 SS |  | -192d |
| RHD4ENMARSUBMV400 |  | Prepare Material Submittal for Straight Joints 3Cx50 mm2 - MAR-MV | 6d | 2026-11-17 | 2026-11-23 | RHD4GNPPMAT1100, RHD4ENMARSUBMV500 SS |  | -192d |
| RHD4ENMARSUBMV500 |  | Prepare Material Submittal for Normally Open Points (Outdoor type) - MAR-MV | 6d | 2026-11-17 | 2026-11-23 | RHD4GNPPMAT1100, RHD4ENMARSUBMV300 SS |  | -192d |
|  | 61 | **RHD4-02-002-Submittals of Material and Prequalifications - SUB-Low Voltage - LV** |  | 2025-12-16 | 2026-11-16 |  |  |  |
| RHD4ENMARSUBLV100 |  | Prepare Material Submittal for UPVC Pipes for Duct Banks - MAR-LV | 7d | 2025-12-16 A | 2026-01-28 A | RHD4ENMARSUBMV100 SS | 100% |  |
| RHD4ENMARSUBLV200 |  | Prepare Material Submittal for Low voltage Cables - MAR-LV | 6d | 2025-12-23 A | 2026-04-08 A | RHD4ENMARSUBIRR300 | 100% |  |
| RHD4ENMARSUBLV300 |  | Prepare Material Submittal for Distribution Pillars - MAR-LV | 6d | 2026-11-10 | 2026-11-16 | RHD4GNPPMAT1100, RHD4ENMARSUBLV200 |  | -186d |
| RHD4ENMARSUBLV400 |  | Prepare Material Submittal for KWH Meter mounting Frame - MAR-LV | 6d | 2026-11-10 | 2026-11-16 | RHD4GNPPMAT1100, RHD4ENMARSUBLV300 SS |  | -186d |
| RHD4ENMARSUBLV500 |  | Prepare Material Submittal for Low Voltage Drawpit - MAR-LV | 6d | 2026-11-10 | 2026-11-16 | RHD4GNPPMAT1100, RHD4ENMARSUBLV100 SS |  | -176d |
| RHD4ENMARSUBLV600 |  | Prepare Material Submittal for Earthing for Pillars and Panels - MAR-LV | 6d | 2026-11-10 | 2026-11-16 | RHD4GNPPMAT1100, RHD4ENMARSUBLV400 SS |  | -182.02d |
|  | 62 | **RHD4-02-002-Submittals of Material and Prequalifications - SUB-Street Lighting Network -SL** |  | 2025-12-24 | 2026-05-02 |  |  |  |
| RHD4ENMARSUBSL100 |  | Prepare Material Submittal for UPVC Pipes for Duct Banks - MAR-SL | 5d | 2025-12-24 A | 2026-01-28 A | RHD4ENMARSUBLV100 | 100% |  |
| RHD4ENMARSUBSL300 |  | Prepare Material Submittal for Lighting Poles - MAR-SL | 6d | 2025-12-30 A | 2026-05-02 A | RHD4ENMARSUBLV200 | 100% |  |
| RHD4ENMARSUBSL200 |  | Prepare Material Submittal for Street Lighting Cables - MAR-SL | 6d | 2026-01-06 A | 2026-04-07 A | RHD4ENMARSUBSL300 | 100% |  |
| RHD4ENMARSUBSL400 |  | Prepare Material Submittal for Street Lighting Luminaire - MAR-SL | 6d | 2026-01-06 A | 2026-04-08 A | RHD4ENMARSUBSL200 SS | 100% |  |
| RHD4ENMARSUBSL500 |  | Prepare Material Submittal for Street Lighting Drawpit - MAR-SL | 5d | 2026-03-23 A | 2026-04-29 A | RHD4GNPPMAT1100, RHD4ENMARSUBSL100 SS | 100% |  |
|  | 63 | **RHD4-02-002-Submittals of Material and Prequalifications - SUB-Landscape Network - LS** |  |  |  |  |  |  |
|  | 64 | **RHD4-02-002-Submittals of Material and Prequalifications - SUB-Telecommunications Network - TC** |  | 2026-01-06 | 2026-05-31 |  |  |  |
| RHD4ENMARSUBTC100 |  | Prepare Material Submittal for HDPE Ducts - MAR-TC | 6d | 2026-01-06 A | 2026-03-18 A | RHD4ENMARSUBSL300 | 100% |  |
| RHD4ENMARSUBTC200 |  | Prepare Material Submittal for HDPE Road Crossings Ducts - MAR-TC | 6d | 2026-01-06 A | 2026-03-18 A | RHD4ENMARSUBTC100 SS | 100% |  |
| RHD4ENMARSUBTC300 |  | Prepare Material Submittal for Telecommunications Manhole - MAR-TC | 6d | 2026-01-13 A | 2026-05-31 A | RHD4ENMARSUBTC200 | 100% |  |
|  | 65 | **RHD4-02-002-Submittals of Material and Prequalifications - SUB-Information and Communication Technol** |  | 2026-01-04 | 2026-05-25 |  |  |  |
| RHD4ENMARSUBICT300 |  | Prepare Material Submittal for Telecommunications Manhole - MAR-ICT | 4d | 2026-01-04 A | 2026-05-25 A | RHD4GNMOB1100 | 100% |  |
| RHD4ENMARSUBICT100 |  | Prepare Material Submittal for HDPE Ducts - MAR-ICT | 6d | 2026-01-13 A | 2026-03-18 A | RHD4ENMARSUBTC100 | 100% |  |
| RHD4ENMARSUBICT200 |  | Prepare Material Submittal for HDPE Road Crossings Ducts - MAR-ICT | 6d | 2026-01-13 A | 2026-03-18 A | RHD4ENMARSUBICT100 SS | 100% |  |
|  | 66 | **RHD4-02-002-Submittals of Material and Prequalifications - SUB-Security Network - CCTV** |  | 2026-10-01 | 2026-11-30 |  |  |  |
| RHD4ENMARSUBCCTV100 |  | Prepare Material Submittal for CCTV Network Poles - MAR-CCTV | 6d | 2026-10-01 A | 2026-10-07 A | RHD4GNPPMAT1100, RHD4ENMARSUBTC300, RHD4ENMARSUBICT300 | 100% |  |
| RHD4ENMARSUBCCTV300 |  | Prepare Material Submittal for CCTV Panels and Panel's Components - MAR-CCTV | 6d | 2026-11-10 | 2026-11-16 | RHD4GNPPMAT1100 |  | -194.02d |
| RHD4ENMARSUBCCTV400 |  | Prepare Material Submittal for CCTV Fiber Optic Cables - MAR-CCTV | 6d | 2026-11-17 | 2026-11-23 | RHD4GNPPMAT1100, RHD4ENMARSUBCCTV300 |  | -194.02d |
| RHD4ENMARSUBCCTV200 |  | Prepare Material Submittal for CCTV Network Cameras - MAR-CCTV | 6d | 2026-11-24 | 2026-11-30 | RHD4GNPPMAT1100, RHD4ENMARSUBCCTV400 |  | -194.02d |
| RHD4ENMARSUBCCTV500 |  | Prepare Material Submittal for CCTV Control Room Components - MAR-CCTV | 6d | 2026-11-24 | 2026-11-30 | RHD4GNPPMAT1100, RHD4ENMARSUBCCTV200 SS |  | -98d |
|  | 67 | **RHD4-02-002-Submittals of Material and Prequalifications - SUB-Road Works - RD** |  | 2025-12-16 | 2026-06-17 |  |  |  |
| RHD4ENMARSUBRD100 |  | Prepare Material Submittal for Aggregate Base Courses - MAR-RD | 6d | 2025-12-16 A | 2026-06-17 A | RHD4GNMOB1000 | 100% |  |
| RHD4ENMARSUBRD500 |  | Prepare Material Submittal for Wheel Stopper - MAR-RD | 6d | 2025-12-16 A | 2026-03-18 A | RHD4GNMOB1000 | 100% |  |
| RHD4ENMARSUBRD600 |  | Prepare Material Submittal for Pavement Marking - MAR-RD | 6d | 2025-12-16 A | 2026-03-18 A | RHD4ENMARSUBRD500 SS | 100% |  |
| RHD4ENMARSUBRD200 |  | Prepare Material Submittal for Bituminous Asphalt Layers - MAR-RD | 6d | 2025-12-23 A | 2026-06-17 A | RHD4ENMARSUBRD100 | 100% |  |
| RHD4ENMARSUBRD300 |  | Prepare Material Submittal for Precast Concrete Curbstone - MAR-RD | 6d | 2025-12-24 A | 2026-02-12 A | RHD4ENMARSUBRD200 | 100% |  |
| RHD4ENMARSUBRD700 |  | Prepare Material Submittal for Traffic Signage - MAR-RD | 6d | 2026-01-01 A | 2026-03-19 A | RHD4ENMARSUBRD300 | 100% |  |
| RHD4ENMARSUBRD400 |  | Prepare Material Submittal for Interlock Precast Concrete Unit Paving - MAR-RD | 6d | 2026-01-08 A | 2026-02-12 A | RHD4ENMARSUBRD700 | 100% |  |
|  | 68 | **RHD4-02-002-Submittals of Material and Prequalifications - SUB-Lift Stations - LFS** |  | 2025-12-13 | 2026-11-23 |  |  |  |
| RHD4ENMARSUBLFS2800 |  | Prepare Material Submittal for Programmable Logic Controllers and Instrumentation for Process Systems - MAR-LFS(Complete | 7d | 2025-12-13 A | 2026-08-03 A | RHD4GNPERMITAT1000 | 100% |  |
| RHD4ENMARSUBLFS2900 |  | Prepare Material Submittal for Fire Alarm System - MAR-LFS | 6d | 2025-12-13 A | 2026-05-03 A | RHD4ENMARSUBLFS2800 SS | 100% |  |
| RHD4ENMARSUBLFS800 |  | Prepare Material Submittal for Ductile Iron Pipes & Fittings - MAR-LFS(Completed) | 7d | 2025-12-15 A | 2026-08-03 A | RHD4ENSDZ6SUBRD220 | 100% |  |
| RHD4ENMARSUBLFS1800 |  | Prepare Material Submittal for UPVC Pipes for Sanitary Drain - MAR-LFS | 5d | 2025-12-16 A | 2026-03-05 A | RHD4GNMOB1000 | 100% |  |
| RHD4ENMARSUBLFS900 |  | Prepare Material Submittal for Sewage Lift Station Valves - MAR-LFS | 7d | 2025-12-17 A | 2026-02-11 A | RHD4ENMARSUBLFS800 SS | 100% |  |
| RHD4ENMARSUBLFS200 |  | Prepare Material Submittal for Roof Waterproofing System - MAR-LFS | 5d | 2025-12-22 A | 2026-05-03 A | RHD4ENMARSUBLFS1800 | 100% |  |
| RHD4ENMARSUBLFS1300 |  | Prepare Material Submittal for Surge Tank - MAR-LFS | 7d | 2025-12-28 A | 2026-03-24 A | RHD4ENMARSUBLFS200 | 100% |  |
| RHD4ENMARSUBLFS2000 |  | Prepare Material Submittal for Motor Control Center (MCC) - MAR-LFS | 4d | 2025-12-28 A | 2026-03-26 A | RHD4ENMARSUBLFS200 | 100% |  |
| RHD4ENMARSUBLFS300 |  | Prepare Material Submittal for Bituminous Sheet Waterproofing - MAR-LFS | 7d | 2025-12-28 A | 2026-05-03 A | RHD4ENMARSUBLFS200 | 100% |  |
| RHD4ENMARSUBLFS1200 |  | Prepare Material Submittal for Submersible pumps - MAR-LFS | 7d | 2025-12-31 A | 2026-03-15 A | RHD4ENMARSUBLFS1100 SS | 100% |  |
| RHD4ENMARSUBLFS2300 |  | Prepare Material Submittal for Standby Diesel Generator - MAR-LFS | 7d | 2026-01-01 A | 2026-04-13 A | RHD4ENMARSUBLFS2000 | 100% |  |
| RHD4ENMARSUBLFS2400 |  | Prepare Material Submittal for Low Voltage Cables - MAR-LFS | 6d | 2026-01-01 A | 2026-03-26 A | RHD4ENMARSUBLFS2300 SS | 100% |  |
| RHD4ENMARSUBLFS3000 |  | Prepare Material Submittal for Fence and Gates for Lift Stations - MAR-LFS | 6d | 2026-01-01 A | 2026-04-28 A | RHD4ENMARSUBLFS2000 | 100% |  |
| RHD4ENMARSUBLFS1400 |  | Prepare Material Submittal for Basket screen - MAR-LFS | 7d | 2026-01-05 A | 2026-03-12 A | RHD4ENMARSUBLFS1300 | 100% |  |
| RHD4ENMARSUBLFS1500 |  | Prepare Material Submittal for Isolation Penstock - MAR-LFS | 6d | 2026-01-05 A | 2026-04-09 A | RHD4ENMARSUBLFS1400 SS | 100% |  |
| RHD4ENMARSUBLFS1600 |  | Prepare Material Submittal for Odours scrubbing system - MAR-LFS | 7d | 2026-01-05 A | 2026-03-01 A | RHD4ENMARSUBLFS1500 SS | 100% |  |
| RHD4ENMARSUBLFS1700 |  | Prepare Material Submittal for JIB Crane - MAR-LFS | 7d | 2026-01-05 A | 2026-03-16 A | RHD4ENMARSUBLFS1600 SS | 100% |  |
| RHD4ENMARSUBLFS400 |  | Prepare Material Submittal for Fluid-Applied Waterproofing - MAR-LFS | 6d | 2026-01-05 A | 2026-04-25 A | RHD4ENMARSUBLFS300 | 100% |  |
| RHD4ENMARSUBLFS2100 |  | Prepare Material Submittal for lighting and power panel boards - MAR-LFS | 4d | 2026-01-08 A | 2026-03-26 A | RHD4ENMARSUBLFS2400 | 100% |  |
| RHD4ENMARSUBLFS700 |  | Prepare Material Submittal for Epoxy Coating - MAR-LFS | 6d | 2026-01-08 A | 2026-04-20 A | RHD4ENMARSUBLFS3000 | 100% |  |
| RHD4ENMARSUBLFS1100 |  | Prepare Material Submittal for Magnetic type flowmeter - MAR-LFS(Completed) | 7d | 2026-01-13 A | 2026-08-03 A | RHD4ENMARSUBRD700 | 100% |  |
| RHD4ENMARSUBLFS2500 |  | Prepare Material Submittal for Lighting Fixtures - MAR-LFS | 6d | 2026-01-13 A | 2026-04-08 A | RHD4ENMARSUBLFS2100 | 100% |  |
| RHD4ENMARSUBLFS1000 |  | Prepare Material Submittal for Screening Container - MAR-LFS | 7d | 2026-08-13 A | 2026-09-18 A | RHD4GNPPMAT1100, RHD4ENMARSUBLFS900 | 100% |  |
| RHD4ENMARSUBLFS2600 |  | Prepare Material Submittal for Wiring Devices - MAR-LFS | 6d | 2026-08-15 A | 2026-08-20 A | RHD4GNPPMAT1100, RHD4ENMARSUBLFS2900 SS | 100% |  |
| RHD4ENMARSUBLFS100 |  | Prepare Material Submittal for Metal Ladder and checkered Plate - MAR-LFS | 6d | 2026-11-10 | 2026-11-16 | RHD4GNPPMAT1100, RHD4ENMARSUBLFS400 |  | -182.02d |
| RHD4ENMARSUBLFS1900 |  | Prepare Material Submittal for wall mounted Split/AC - MAR-LFS | 6d | 2026-11-10 | 2026-11-16 | RHD4GNPPMAT1100, RHD4ENMARSUBLFS1700 SS |  | -186d |
| RHD4ENMARSUBLFS2700 |  | Prepare Material Submittal for Enclosed Switches and Circuit Breakers - MAR-LFS | 6d | 2026-11-10 | 2026-11-16 | RHD4GNPPMAT1100, RHD4ENMARSUBLFS2600 SS |  | -192d |
| RHD4ENMARSUBLFS500 |  | Prepare Material Submittal for Metal Doors and Access Doors and Frames - MAR-LFS | 6d | 2026-11-10 | 2026-11-16 | RHD4GNPPMAT1100 |  | -192d |

| ID | WBS | Task | Duration | Start | Finish | Predecessors | Complete | Total float |
| --- | --- | --- | --- | --- | --- | --- | --- | --- |
| RHD4ENMARSUBLFS2200 |  | Prepare Material Submittal for Earthing for Lift Stations - MAR-LFS | 6d | 2026-11-17 | 2026-11-23 | RHD4GNPPMAT1100, RHD4ENMARSUBLFS2700 |  | -192d |
| RHD4ENMARSUBLFS600 |  | Prepare Material Submittal for Painting - MAR-LFS | 6d | 2026-11-17 | 2026-11-23 | RHD4GNPPMAT1100, RHD4ENMARSUBLFS500 |  | -192d |
|  | 2 | **RHD4-02-002-Submittals of Material and Prequalifications - SUB-Tunnels - TUN** |  | 2026-01-15 | 2026-05-17 |  |  |  |
| RHD4ENMARSUBTU100 |  | Prepare Material Submittal for Concrete - MAR-TUN | 6d | 2026-01-15 A | 2026-05-17 A | RHD4ENMARSUBLFS700 | 100% |  |
|  | 69 | **RHD4-02-002-Approval of Material and Prequalifications - APP** |  | 2025-12-13 | 2026-12-07 |  |  |  |
|  | 1 | **RHD4-02-002-Approval of Material and Prequalifications - APP-Earth works Material - EW** |  | 2025-12-17 | 2026-02-21 |  |  |  |
| RHD4ENMARAPPEW100 |  | Approval of Material Submittal for Earth work Materials - MAR-EW | 7d | 2025-12-17 A | 2026-02-21 A | RHD4ENMARSUBEW100 | 100% |  |
|  | 70 | **RHD4-02-002-Approval of Material and Prequalifications - APP-Storm Network - ST** |  | 2025-12-17 | 2026-11-16 |  |  |  |
| RHD4ENMARAPPST100 |  | Approval of Material Submittal for GRP pipes - MAR-ST | 7d | 2025-12-17 A | 2026-02-05 A | RHD4ENSDZ6APPCCTV210, RHD4ENSDZ6APPSL170, RHD4ENSDZ6APPLV160, RHD4ENSDZ6APPICT200, RHD4ENMSSL2010, RHD4ENSDZ6APPTC190, RHD4ENMSLV2010, RHD4ENMARSUBST100 | 100% |  |
| RHD4ENMARAPPST200 |  | Approval of Material Submittal for UPVC pipes - MAR-ST | 7d | 2025-12-17 A | 2026-01-31 A | RHD4ENMARSUBST200 | 100% |  |
| RHD4ENMARAPPST400 |  | Approval of Material Submittal for Catch basin - MAR-ST | 7d | 2025-12-24 A | 2026-03-28 A | RHD4ENMARSUBST400 | 100% |  |
| RHD4ENMARAPPST300 |  | Approval of Material Submittal for HDPE pipes - MAR-ST | 7d | 2025-12-31 A | 2026-02-09 A | RHD4ENMARSUBST300 | 100% |  |
| RHD4ENMARAPPST700 |  | Approval of Material Submittal for Precast Concrete - MAR-ST | 7d | 2026-01-14 A | 2026-03-29 A | RHD4ENMARSUBST700 | 100% |  |
| RHD4ENMARAPPST600 |  | Approval of Material Submittal for Tensile reinforcement steel - MAR-ST | 7d | 2026-04-21 A | 2026-04-27 A | RHD4ENMARSUBST600 | 100% |  |
| RHD4ENMARAPPST800 |  | Approval of Material Submittal for Metal Works (Stairs - Manhole Covers) - MAR-ST | 7d | 2026-08-18 A | 2026-09-01 A | RHD4ENMARSUBST800 | 100% |  |
| RHD4ENMARAPPST500 |  | Approval of Material Submittal for Grouted Riprap - MAR-ST | 6d | 2026-11-10 | 2026-11-16 | RHD4ENMARSUBST500 |  | -170.02d |
|  | 72 | **RHD4-02-002-Approval of Material and Prequalifications - APP-Potable Water Network - PT** |  | 2025-12-23 | 2026-11-16 |  |  |  |
| RHD4ENMARAPPPT300 |  | Approval of Material Submittal for Fire Hydrants - MAR-PT | 2d | 2025-12-23 A | 2026-01-19 A | RHD4ENMARSUBPT300 | 100% |  |
| RHD4ENMARAPPPT400 |  | Approval of Material Submittal for Precast Concrete - MAR-PT | 6d | 2025-12-30 A | 2026-03-28 A | RHD4ENMARSUBPT400 | 100% |  |
| RHD4ENMARAPPPT100 |  | Approval of Material Submittal for HDPE pipes - MAR-PT | 7d | 2025-12-31 A | 2026-02-05 A | RHD4ENMARSUBPT100 | 100% |  |
| RHD4ENMARAPPPT200 |  | Approval of Material Submittal for Valves - MAR-PT | 7d | 2026-01-07 A | 2026-02-18 A | RHD4ENMARSUBPT200 | 100% |  |
| RHD4ENMARAPPPT500 |  | Approval of Material Submittal for Stem and Surface box - MAR-PT | 6d | 2026-10-08 A | 2026-10-14 A | RHD4ENMARSUBPT500 | 100% |  |
| RHD4ENMARAPPPT600 |  | Approval of Material Submittal for Metal Works (Chamber's Covers) - MAR-PT | 6d | 2026-11-10 | 2026-11-16 | RHD4GNPPMAT1100, RHD4ENMARSUBPT400 SS, RHD4ENMARSUBPT600 |  | -175.02d |
|  | 73 | **RHD4-02-002-Approval of Material and Prequalifications - APP-Irrigation Network - IRR** |  | 2025-12-23 | 2026-11-16 |  |  |  |
| RHD4ENMARAPPIRR300 |  | Approval of Material Submittal for Precast Concrete - MAR-IRR | 6d | 2025-12-23 A | 2026-03-28 A | RHD4ENMARSUBIRR300 | 100% |  |
| RHD4ENMARAPPIRR100 |  | Approval of Material Submittal for HDPE pipes - MAR-IRR | 7d | 2025-12-31 A | 2026-02-05 A | RHD4ENMARSUBIRR100 | 100% |  |
| RHD4ENMARAPPIRR200 |  | Approval of Material Submittal for Valves - MAR-IRR | 7d | 2026-01-07 A | 2026-02-18 A | RHD4ENMARSUBIRR200 | 100% |  |
| RHD4ENMARAPPIRR400 |  | Approval of Material Submittal for Stem and Surface box - MAR-IRR | 6d | 2026-02-12 A | 2026-02-17 A | RHD4ENMARSUBIRR400 | 100% |  |
| RHD4ENMARAPPIRR500 |  | Approval of Material Submittal for Metal Works (Chamber's Covers) - MAR-IRR | 6d | 2026-11-10 | 2026-11-16 | RHD4GNPPMAT1100, RHD4ENMARSUBIRR300, RHD4ENMARSUBIRR500 |  | -175.02d |
|  | 74 | **RHD4-02-002-Approval of Material and Prequalifications - APP-Medium Voltage - MV** |  | 2025-12-24 | 2026-11-30 |  |  |  |
| RHD4ENMARAPPMV100 |  | Approval of Material Submittal for UPVC Pipes for Duct Banks - MAR-MV | 6d | 2025-12-24 A | 2026-02-04 A | RHD4ENMARSUBMV100 | 100% |  |
| RHD4ENMARAPPMV600 |  | Approval of Material Submittal for Unit Substations - MAR-MV | 6d | 2026-11-17 | 2026-11-23 | RHD4ENMARSUBMV600 |  | -85d |
| RHD4ENMARAPPMV700 |  | Approval of Material Submittal for Ring Main Unit (RMU) - MAR-MV | 6d | 2026-11-17 | 2026-11-23 | RHD4ENMARSUBMV700 |  | -85d |
| RHD4ENMARAPPMV200 |  | Approval of Material Submittal for Medium Voltage Cable 3Cx500 mm2 - MAR-MV | 6d | 2026-11-24 | 2026-11-30 | RHD4ENMARSUBMV200 |  | -192d |
| RHD4ENMARAPPMV300 |  | Approval of Material Submittal for Medium Voltage Cable 3Cx50 mm2 - MAR-MV | 6d | 2026-11-24 | 2026-11-30 | RHD4ENMARSUBMV300 |  | -192d |
| RHD4ENMARAPPMV400 |  | Approval of Material Submittal for Straight Joints 3Cx50 mm2 - MAR-MV | 6d | 2026-11-24 | 2026-11-30 | RHD4ENMARSUBMV400 |  | -192d |
| RHD4ENMARAPPMV500 |  | Approval of Material Submittal for Normally Open Points (Outdoor type) - MAR-MV | 6d | 2026-11-24 | 2026-11-30 | RHD4ENMARSUBMV500 |  | -192d |
|  | 75 | **RHD4-02-002-Approval of Material and Prequalifications - APP-Low Voltage - LV** |  | 2025-12-24 | 2026-11-23 |  |  |  |
| RHD4ENMARAPPLV100 |  | Approval of Material Submittal for UPVC Pipes for Duct Banks - MAR-LV | 7d | 2025-12-24 A | 2026-01-31 A | RHD4ENMARSUBLV100 | 100% |  |
| RHD4ENMARAPPLV200 |  | Approval of Material Submittal for Low voltage Cables - MAR-LV | 6d | 2025-12-30 A | 2026-04-15 A | RHD4ENMARSUBLV200 | 100% |  |
| RHD4ENMARAPPLV300 |  | Approval of Material Submittal for Distribution Pillars - MAR-LV | 6d | 2026-11-17 | 2026-11-23 | RHD4ENMARSUBLV300 |  | -186d |
| RHD4ENMARAPPLV400 |  | Approval of Material Submittal for KWH Meter mounting Frame - MAR-LV | 6d | 2026-11-17 | 2026-11-23 | RHD4ENMARSUBLV400 |  | -186d |
| RHD4ENMARAPPLV500 |  | Approval of Material Submittal for Low Voltage Drawpit - MAR-LV | 6d | 2026-11-17 | 2026-11-23 | RHD4ENMARSUBLV500 |  | -176d |
| RHD4ENMARAPPLV600 |  | Approval of Material Submittal for Earthing for Pillars and Panels - MAR-LV | 6d | 2026-11-17 | 2026-11-23 | RHD4ENMARSUBLV600 |  | -182.02d |
|  | 76 | **RHD4-02-002-Approval of Material and Prequalifications - APP-Street Lighting Network -SL** |  | 2025-12-30 | 2026-05-05 |  |  |  |
| RHD4ENMARAPPSL100 |  | Approval of Material Submittal for UPVC Pipes for Duct Banks - MAR-SL | 6d | 2025-12-30 A | 2026-02-04 A | RHD4ENMARSUBSL100 | 100% |  |
| RHD4ENMARAPPSL300 |  | Approval of Material Submittal for Lighting Poles - MAR-SL | 3d | 2026-01-06 A | 2026-05-05 A | RHD4ENMARSUBSL300 | 100% |  |
| RHD4ENMARAPPSL200 |  | Approval of Material Submittal for Street Lighting Cables - MAR-SL | 6d | 2026-01-13 A | 2026-04-15 A | RHD4ENMARSUBSL200 | 100% |  |
| RHD4ENMARAPPSL400 |  | Approval of Material Submittal for Street Lighting Luminaire - MAR-SL | 6d | 2026-01-13 A | 2026-04-15 A | RHD4ENMARSUBSL400 | 100% |  |
| RHD4ENMARAPPSL500 |  | Approval of Material Submittal for Street Lighting Drawpit - MAR-SL | 2d | 2026-04-29 A | 2026-04-30 A | RHD4ENMARSUBSL500 | 100% |  |
|  | 77 | **RHD4-02-002-Approval of Material and Prequalifications - APP-Landscape Network - LS** |  |  |  |  |  |  |
|  | 78 | **RHD4-02-002-Approval of Material and Prequalifications - APP-Telecommunications Network - TC** |  | 2026-01-13 | 2026-06-04 |  |  |  |
| RHD4ENMARAPPTC100 |  | Approval of Material Submittal for HDPE Ducts - MAR-TC | 4d | 2026-01-13 A | 2026-03-26 A | RHD4ENMARSUBTC100 | 100% |  |
| RHD4ENMARAPPTC200 |  | Approval of Material Submittal for HDPE Road Crossings Ducts - MAR-TC | 4d | 2026-01-13 A | 2026-03-26 A | RHD4ENMARSUBTC200 | 100% |  |
| RHD4ENMARAPPTC300 |  | Approval of Material Submittal for Telecommunications Manhole - MAR-TC | 6d | 2026-01-20 A | 2026-06-04 A | RHD4ENMARSUBTC300 | 100% |  |
|  | 79 | **RHD4-02-002-Approval of Material and Prequalifications - APP-Information and Communication Technolog** |  | 2026-01-08 | 2026-06-04 |  |  |  |
| RHD4ENMARAPPICT300 |  | Approval of Material Submittal for Telecommunications Manhole - MAR-ICT | 6d | 2026-01-08 A | 2026-06-04 A | RHD4ENMARSUBICT300 | 100% |  |
| RHD4ENMARAPPICT100 |  | Approval of Material Submittal for HDPE Ducts - MAR-ICT | 4d | 2026-01-20 A | 2026-03-26 A | RHD4ENMARSUBICT100 | 100% |  |
| RHD4ENMARAPPICT200 |  | Approval of Material Submittal for HDPE Road Crossings Ducts - MAR-ICT | 4d | 2026-01-20 A | 2026-03-26 A | RHD4ENMARSUBICT200 | 100% |  |
|  | 80 | **RHD4-02-002-Approval of Material and Prequalifications - APP-Security Network - CCTV** |  | 2026-11-10 | 2026-12-07 |  |  |  |
| RHD4ENMARAPPCCTV100 |  | Approval of Material Submittal for CCTV Network Poles - MAR-CCTV | 6d | 2026-11-10 | 2026-11-16 | RHD4ENMARSUBCCTV100 |  | -194.02d |
| RHD4ENMARAPPCCTV300 |  | Approval of Material Submittal for CCTV Panels and Panel's Components - MAR-CCTV | 6d | 2026-11-17 | 2026-11-23 | RHD4ENMARSUBCCTV300 |  | -194.02d |
| RHD4ENMARAPPCCTV400 |  | Approval of Material Submittal for CCTV Fiber Optic Cables - MAR-CCTV | 6d | 2026-11-24 | 2026-11-30 | RHD4ENMARSUBCCTV400 |  | -194.02d |
| RHD4ENMARAPPCCTV200 |  | Approval of Material Submittal for CCTV Network Cameras - MAR-CCTV | 6d | 2026-12-01 | 2026-12-07 | RHD4ENMARSUBCCTV200 |  | -194.02d |
| RHD4ENMARAPPCCTV500 |  | Approval of Material Submittal for CCTV Control Room Components - MAR-CCTV | 6d | 2026-12-01 | 2026-12-07 | RHD4ENMARSUBCCTV500 |  | -98d |
|  | 81 | **RHD4-02-002-Approval of Material and Prequalifications - APP-Road Works - RD** |  | 2025-12-23 | 2026-11-16 |  |  |  |
| RHD4ENMARAPPRD100 |  | Approval of Material Submittal for Aggregate Base Courses - MAR-RD | 6d | 2025-12-23 A | 2026-05-24 A | RHD4ENMARSUBRD100 | 100% |  |
| RHD4ENMARAPPRD600 |  | Approval of Material Submittal for Pavement Marking - MAR-RD | 6d | 2025-12-23 A | 2026-03-28 A | RHD4ENMARSUBRD600 | 100% |  |
| RHD4ENMARAPPRD200 |  | Approval of Material Submittal for Bituminous Asphalt Layers - MAR-RD | 6d | 2025-12-30 A | 2026-05-24 A | RHD4ENMARSUBRD200 | 100% |  |
| RHD4ENMARAPPRD300 |  | Approval of Material Submittal for Precast Concrete Curbstone - MAR-RD | 6d | 2026-01-01 A | 2026-02-19 A | RHD4ENMARSUBRD300 | 100% |  |

| ID | WBS | Task | Duration | Start | Finish | Predecessors | Complete | Total float |
| --- | --- | --- | --- | --- | --- | --- | --- | --- |
| RHD4ENMARAPPRD700 |  | Approval of Material Submittal for Traffic Signage - MAR-RD | 6d | 2026-01-08 A | 2026-03-28 A | RHD4ENMARSUBRD700 | 100% |  |
| RHD4ENMARAPPRD400 |  | Approval of Material Submittal for Interlock Precast Concrete Unit Paving - MAR-RD | 7d | 2026-01-15 A | 2026-02-16 A | RHD4ENMARSUBRD400 | 100% |  |
| RHD4ENMARAPPRD500 |  | Approval of Material Submittal for Wheel Stopper - MAR-RD | 6d | 2026-11-10 | 2026-11-16 | RHD4ENMARSUBRD500 |  | -182.02d |
|  | 82 | **RHD4-02-002-Approval of Material and Prequalifications - APP-Lift Stations - LFS** |  | 2025-12-13 | 2026-11-30 |  |  |  |
| RHD4ENMARAPPLFS2800 |  | Approval of Material Submittal for Programmable Logic Controllers and Instrumentation for Process Systems - MAR-LFS(Comp | 6d | 2025-12-13 A | 2026-08-03 A | RHD4ENMARSUBLFS2800 SS | 100% |  |
| RHD4ENMARAPPLFS2900 |  | Approval of Material Submittal for Fire Alarm System - MAR-LFS | 3d | 2025-12-20 A | 2026-05-06 A | RHD4ENMARSUBLFS2900 | 100% |  |
| RHD4ENMARAPPLFS1800 |  | Approval of Material Submittal for UPVC Pipes for Sanitary Drain - MAR-LFS | 7d | 2025-12-22 A | 2026-03-08 A | RHD4ENMARSUBLFS1800 | 100% |  |
| RHD4ENMARAPPLFS900 |  | Approval of Material Submittal for Sewage Lift Station Valves - MAR-LFS | 6d | 2025-12-24 A | 2026-02-17 A | RHD4ENMARSUBLFS900 | 100% |  |
| RHD4ENMARAPPLFS200 |  | Approval of Material Submittal for Roof Waterproofing System - MAR-LFS | 3d | 2025-12-28 A | 2026-05-06 A | RHD4ENMARSUBLFS200 | 100% |  |
| RHD4ENMARAPPLFS2000 |  | Approval of Material Submittal for Motor Control Center (MCC) - MAR-LFS | 2d | 2026-01-01 A | 2026-03-29 A | RHD4ENMARSUBLFS2000 | 100% |  |
| RHD4ENMARAPPLFS1600 |  | Approval of Material Submittal for Odours scrubbing system - MAR-LFS | 6d | 2026-01-03 A | 2026-01-08 A | RHD4ENMARSUBLFS1600 | 100% |  |
| RHD4ENMARAPPLFS1300 |  | Approval of Material Submittal for Surge Tank - MAR-LFS | 6d | 2026-01-05 A | 2026-04-01 A | RHD4ENMARSUBLFS1300 | 100% |  |
| RHD4ENMARAPPLFS300 |  | Approval of Material Submittal for Bituminous Sheet Waterproofing - MAR-LFS | 3d | 2026-01-05 A | 2026-05-06 A | RHD4ENMARAPPLFS2000, RHD4ENMARSUBLFS300 | 100% |  |
| RHD4ENMARAPPLFS1200 |  | Approval of Material Submittal for Submersible pumps - MAR-LFS | 6d | 2026-01-07 A | 2026-03-18 A | RHD4ENMARSUBLFS1200 | 100% |  |
| RHD4ENMARAPPLFS2400 |  | Approval of Material Submittal for Low Voltage Cables - MAR-LFS | 3d | 2026-01-08 A | 2026-03-30 A | RHD4ENMARSUBLFS2400 | 100% |  |
| RHD4ENMARAPPLFS3000 |  | Approval of Material Submittal for Fences and Gates - MAR-LFS | 2d | 2026-01-08 A | 2026-04-30 A | RHD4ENMARSUBLFS3000 | 100% |  |
| RHD4ENMARAPPLFS2300 |  | Approval of Material Submittal for Standby Diesel Generator - MAR-LFS | 6d | 2026-01-10 A | 2026-04-20 A | RHD4ENMARSUBLFS2300 | 100% |  |
| RHD4ENMARAPPLFS1500 |  | Approval of Material Submittal for Isolation Penstock - MAR-LFS | 6d | 2026-01-12 A | 2026-04-16 A | RHD4ENMARSUBLFS1500 | 100% |  |
| RHD4ENMARAPPLFS1400 |  | Approval of Material Submittal for Basket screen - MAR-LFS | 7d | 2026-01-13 A | 2026-03-15 A | RHD4ENMARSUBLFS1400 | 100% |  |
| RHD4ENMARAPPLFS1700 |  | Approval of Material Submittal for JIB Crane - MAR-LFS | 7d | 2026-01-13 A | 2026-03-18 A | RHD4ENMARSUBLFS1700 | 100% |  |
| RHD4ENMARAPPLFS2100 |  | Approval of Material Submittal for lighting and power panel boards - MAR-LFS | 2d | 2026-01-13 A | 2026-03-29 A | RHD4ENMARSUBLFS2100 | 100% |  |
| RHD4ENMARAPPLFS700 |  | Approval of Material Submittal for Epoxy Coating - MAR-LFS | 2d | 2026-01-15 A | 2026-04-22 A | RHD4ENMARSUBLFS700 | 100% |  |
| RHD4ENMARAPPLFS400 |  | Approval of Material Submittal for Fluid-Applied Waterproofing - MAR-LFS | 3d | 2026-01-17 A | 2026-04-28 A | RHD4ENMARAPPLFS2300, RHD4ENMARSUBLFS400 | 100% |  |
| RHD4ENMARAPPLFS2500 |  | Approval of Material Submittal for Lighting Fixtures - MAR-LFS | 6d | 2026-01-20 A | 2026-04-14 A | RHD4ENMARSUBLFS2500 | 100% |  |
| RHD4ENMARAPPLFS800 |  | Approval of Material Submittal for Ductile Iron Pipes & Fittings - MAR-LFS | 6d | 2026-08-04 A | 2026-08-10 A | RHD4GNPPMAT1100, RHD4ENSDZ6SUBRD220, RHD4ENMARSUBLFS800 | 100% |  |
| RHD4ENMARAPPLFS1100 |  | Approval of Material Submittal for Magnetic type flowmeter - MAR-LFS | 6d | 2026-09-19 A | 2026-09-26 A | RHD4GNPPMAT1100, RHD4ENMARSUBLFS1000, RHD4ENMARSUBLFS1100 | 100% |  |
| RHD4ENMARAPPLFS1000 |  | Approval of Material Submittal for Screening Container - MAR-LFS | 6d | 2026-10-01 A | 2026-10-07 A | RHD4ENMARAPPLFS2400, RHD4ENMARSUBLFS1000 | 100% |  |
| RHD4ENMARAPPLFS2600 |  | Approval of Material Submittal for Wiring Devices - MAR-LFS | 6d | 2026-11-10 | 2026-11-16 | RHD4ENMARSUBLFS2600 |  | -180d |
| RHD4ENMARAPPLFS2800_R |  | Approval of Material Submittal for Programmable Logic Controllers and Instrumentation for Process Systems - MAR-LFS(Rema | 6d | 2026-11-10 | 2026-11-16 | RHD4ENMARAPPLFS2800, RHD4GNPPMAT1100, RHD4ENMARSUBLFS2500, RHD4ENMARSUBLFS2800 |  | -70d |
| RHD4ENMARAPPLFS100 |  | Approval of Material Submittal for Metal Ladder and checkered Plate - MAR-LFS | 6d | 2026-11-17 | 2026-11-23 | RHD4ENMARSUBLFS100 |  | -182.02d |
| RHD4ENMARAPPLFS1900 |  | Approval of Material Submittal for wall mounted Split/AC - MAR-LFS | 6d | 2026-11-17 | 2026-11-23 | RHD4ENMARSUBLFS1900 |  | -186d |
| RHD4ENMARAPPLFS2700 |  | Approval of Material Submittal for Enclosed Switches and Circuit Breakers - MAR-LFS | 6d | 2026-11-17 | 2026-11-23 | RHD4ENMARSUBLFS2700 |  | -192d |
| RHD4ENMARAPPLFS500 |  | Approval of Material Submittal for Metal Doors and Access Doors and Frames - MAR-LFS | 6d | 2026-11-17 | 2026-11-23 | RHD4ENMARSUBLFS500 |  | -186d |
| RHD4ENMARAPPLFS2200 |  | Approval of Material Submittal for Earthing for Lift Stations - MAR-LFS | 6d | 2026-11-24 | 2026-11-30 | RHD4ENMARSUBLFS2200 |  | -192d |
| RHD4ENMARAPPLFS600 |  | Approval of Material Submittal for Painting - MAR-LFS | 6d | 2026-11-24 | 2026-11-30 | RHD4ENMARSUBLFS600 |  | -192d |
|  | 71 | **RHD4-02-002-Approval of Material and Prequalifications - APP-Sewage Network - SW** |  | 2025-12-24 | 2026-03-29 |  |  |  |
| RHD4ENMARAPPSW200 |  | Approval of Material Submittal for GRP pipes - MAR-SW | 7d | 2025-12-24 A | 2026-02-04 A | RHD4ENMARSUBSW200 | 100% |  |
| RHD4ENMARAPPSW100 |  | Approval of Material Submittal for UPVC pipes - MAR-SW | 7d | 2025-12-31 A | 2026-01-31 A | RHD4ENMARSUBSW100 | 100% |  |
| RHD4ENMARAPPSW300 |  | Approval of Material Submittal for Valves - MAR-SW | 7d | 2025-12-31 A | 2026-01-19 A | RHD4ENMARSUBSW300 | 100% |  |
| RHD4ENMARAPPSW400 |  | Approval of Material Submittal for Precast Concrete - MAR-SW | 6d | 2026-01-07 A | 2026-03-29 A | RHD4ENMARSUBSW400 | 100% |  |
| RHD4ENMARAPPSW600 |  | Approval of Material Submittal for HDPE pipes - MAR-SW | 7d | 2026-01-14 A | 2026-02-05 A | RHD4ENMARSUBSW600 | 100% |  |
| RHD4ENMARAPPSW500 |  | Approval of Material Submittal for Metal Works (Stairs - Manhole Covers) - MAR-SW | 2d | 2026-01-21 A | 2026-02-11 A | RHD4ENMARSUBSW500 | 100% |  |
|  | 2 | **RHD4-02-002-Approval of Material and Prequalifications - APP-Tunnels - TUN** |  | 2026-01-22 | 2026-05-24 |  |  |  |
| RHD4ENMARAPPTU100 |  | Approval of Material Submittal for Concrete - MAR-TU | 6d | 2026-01-22 A | 2026-05-24 A | RHD4ENMARSUBTU100 | 100% |  |
|  | 97 | **RHD4-02-002-Procurement - PR** |  | 2025-12-31 | 2027-04-28 |  |  |  |
|  | 127 | **RHD4-02-002-Long Lead Items -LOL** |  | 2026-01-20 | 2027-04-28 |  |  |  |
|  | 128 | **RHD4-02-002-Long Lead Items - LOL-Material Purchase Order - PO** |  | 2026-01-20 | 2026-12-23 |  |  |  |
|  | 104 | **RHD4-02-002-LOL-Material Purchase Order - PO-Medium Voltage - MV** |  | 2026-11-24 | 2026-12-09 |  |  |  |
| RHD4PRLOLPOMV1500 |  | Material Purchase Order for Unit Substations - LOL-MV | 14d | 2026-11-24 | 2026-12-09 | RHD4ENMARAPPMV600 |  | -85d |
| RHD4PRLOLPOMV1600 |  | Material Purchase Order for Ring Main Unit (RMU) - LOL-MV | 14d | 2026-11-24 | 2026-12-09 | RHD4ENMARAPPMV700 |  | -85d |
|  | 129 | **RHD4-02-002-LOL-Material Purchase Order - PO-Security Network - CCTV** |  | 2026-12-08 | 2026-12-23 |  |  |  |
| RHD4PRLOLPOCCTV1000 |  | Material Purchase Order for CCTV Control Room Components - LOL-CCTV | 14d | 2026-12-08 | 2026-12-23 | RHD4ENMARAPPCCTV500 |  | -98d |
|  | 130 | **RHD4-02-002-LOL-Material Purchase Order - PO-Lift Stations - LFS** |  | 2026-01-20 | 2026-12-02 |  |  |  |
| RHD4PRLOLPOLFS1400 |  | Material Purchase Order for Odours scrubbing system - LOL-LFS | 4d | 2026-01-20 A | 2026-08-08 A | RHD4ENMARAPPLFS1600 | 100% |  |
| RHD4PRLOLPOLFS1200 |  | Material Purchase Order for Submersible pumps - LOL-PO | 7d | 2026-01-28 A | 2026-08-11 A | RHD4ENMARAPPLFS1200 | 100% |  |
| RHD4PRLOLPOLFS1300 |  | Material Purchase Order for Surge Tank - LOL-LFS | 14d | 2026-08-11 A | 2026-09-30 A | RHD4ENMARAPPLFS1300 | 100% |  |
| RHD4PRLOLPOLFS1500 |  | Material Purchase Order for JIB Crane - LOL-LFS | 14d | 2026-09-22 A | 2026-10-08 A | RHD4ENMARAPPLFS1700 | 100% |  |
| RHD4PRLOLPOLFS2000 |  | Material Purchase Order for Isolation Penstock - LOL-LFS | 14d | 2026-09-22 A | 2026-10-08 A | RHD4ENMARAPPLFS1500 | 100% |  |
| RHD4PRLOLPOLFS1000 |  | Material Purchase Order for Screening Container - LOL-LFS | 14d | 2026-09-26 A | 2026-10-11 A | RHD4ENMARAPPLFS1000 | 100% |  |
| RHD4PRLOLPOLFS1600 |  | Material Purchase Order for Standby Diesel Generator - LOL-LFS | 9d | 2026-10-01 A | 2026-10-11 A | RHD4ENMARAPPLFS2300 | 100% |  |
| RHD4PRLOLPOLFS1100 |  | Material Purchase Order for Magnetic type flowmeter - LOL-PO | 14d | 2026-11-10 | 2026-11-25 | RHD4ENMARAPPLFS1100 |  | -28d |
| RHD4PRLOLPOLFS1700 |  | Material Purchase Order for Programmable Logic Controllers and Instrumentation for Process Systems - LOL-LFS | 14d | 2026-11-17 | 2026-12-02 | RHD4ENMARAPPLFS2800_R |  | -70d |
|  | 131 | **RHD4-02-002-Long Lead Items - LOL-Manufacturing - MAF** |  | 2026-11-10 | 2027-04-08 |  |  |  |
|  | 1 | **RHD4-02-002-LOL-Manufacturing - MAF-Medium Voltage Network - MV** |  | 2026-12-10 | 2027-04-08 |  |  |  |
| RHD4PRLOLMAFMV1500 |  | Material Fabrication for Unit Substations - LOL-MV | 120d | 2026-12-10 | 2027-04-08 | RHD4PRLOLPOMV1500 |  | -100d |
| RHD4PRLOLMAFMV1600 |  | Material Fabrication for Ring Main Unit (RMU) - LOL-MV | 120d | 2026-12-10 | 2027-04-08 | RHD4PRLOLPOMV1600 |  | -100d |
|  | 132 | **RHD4-02-002-LOL-Manufacturing - MAF-Security Network - CCTV** |  | 2026-12-24 | 2027-03-23 |  |  |  |
| RHD4PRLOLMAFCCTV1000 |  | Material Fabrication for CCTV Control Room Components - LOL-MAF | 90d | 2026-12-24 | 2027-03-23 | RHD4PRLOLPOCCTV1000 |  | -115d |
|  | 133 | **RHD4-02-002-LOL-Manufacturing - MAF-Lift Stations - LFS** |  | 2026-11-10 | 2027-04-01 |  |  |  |
| RHD4PRLOLMAFLFS1000 |  | Material Fabrication for Screening Container - LOL-MAF | 120d | 2026-11-10 | 2027-03-09 | RHD4PRLOLPOLFS1000 |  | -44d |

| ID | WBS | Task | Duration | Start | Finish | Predecessors | Complete | Total float |
| --- | --- | --- | --- | --- | --- | --- | --- | --- |
| RHD4PRLOLMAFLFS1200 |  | Material Fabrication for Magnetic type flowmeter - LOL-MAF | 120d | 2026-11-10 | 2027-03-09 | RHD4PRLOLPOLFS1200 |  | -68d |
| RHD4PRLOLMAFLFS1300 |  | Material Fabrication for Surge Tank - LOL-MAF | 120d | 2026-11-10 | 2027-03-09 | RHD4PRLOLPOLFS1300 |  | -68d |
| RHD4PRLOLMAFLFS1400 |  | Material Fabrication for Odours scrubbing system - LOL-MAF | 120d | 2026-11-10 | 2027-03-09 | RHD4PRLOLPOLFS1400 |  | -68d |
| RHD4PRLOLMAFLFS1500 |  | Material Fabrication for JIB Crane - LOL-MAF | 120d | 2026-11-10 | 2027-03-09 | RHD4PRLOLPOLFS1500 |  | -54d |
| RHD4PRLOLMAFLFS1600 |  | Material Fabrication for Standby Diesel Generator - LOL-MAF | 120d | 2026-11-10 | 2027-03-09 | RHD4PRLOLPOLFS1600 |  | -62d |
| RHD4PRLOLMAFLFS2000 |  | Material Fabrication for Isolation Penstock - LOL-DOS | 120d | 2026-11-10 | 2027-03-09 | RHD4PRLOLPOLFS2000 |  | -62d |
| RHD4PRLOLMAFLFS1100 |  | Material Fabrication for Submersible pumps - LOL-MAF | 120d | 2026-11-26 | 2027-03-25 | RHD4PRLOLPOLFS1100 |  | -32d |
| RHD4PRLOLMAFLFS1700 |  | Material Fabrication for Programmable Logic Controllers and Instrumentation for Process Systems - LOL-MAF | 120d | 2026-12-03 | 2027-04-01 | RHD4PRLOLPOLFS1700 |  | -83d |
|  | 134 | **RHD4-02-002-Long Lead Items - LOL-Material Delivery on Site - DOS** |  | 2027-03-10 | 2027-04-22 |  |  |  |
|  | 1 | **RHD4-02-002-LOL-Material Delivery on Site - DOS -Medium Voltage Network - MV** |  | 2027-04-09 | 2027-04-22 |  |  |  |
| RHD4PRLOLDOSMV1500 |  | Delivery for Unit Substations - LOL-DOS | 14d | 2027-04-09 | 2027-04-22 | RHD4PRLOLMAFMV1500 |  | -100d |
| RHD4PRLOLDOSMV1600 |  | Delivery for Ring Main Unit (RMU) - LOL-DOS | 14d | 2027-04-09 | 2027-04-22 | RHD4PRLOLMAFMV1600 |  | -100d |
|  | 135 | **RHD4-02-002-LOL-Material Delivery on Site - DOS -Security Network - CCTV** |  | 2027-03-24 | 2027-04-06 |  |  |  |
| RHD4PRLOLDOSCCTV1000 |  | Delivery for CCTV Control Room Components - LOL-DOS | 14d | 2027-03-24 | 2027-04-06 | RHD4PRLOLMAFCCTV1000 |  | -115d |
|  | 136 | **RHD4-02-002-LOL-Material Delivery on Site - DOS -Lift Stations - LFS** |  | 2027-03-10 | 2027-04-15 |  |  |  |
| RHD4PRLOLDOSLFS1000 |  | Delivery for Screening Container - LOL-DOS | 14d | 2027-03-10 | 2027-03-23 | RHD4PRLOLMAFLFS1000 |  | -44d |
| RHD4PRLOLDOSLFS1200 |  | Delivery for Magnetic type flowmeter - LOL-DOS | 14d | 2027-03-10 | 2027-03-23 | RHD4PRLOLMAFLFS1200 |  | -68d |
| RHD4PRLOLDOSLFS1300 |  | Delivery for Surge Tank - LOL-DOS | 14d | 2027-03-10 | 2027-03-23 | RHD4PRLOLMAFLFS1300 |  | -68d |
| RHD4PRLOLDOSLFS1400 |  | Delivery for Odours scrubbing system - LOL-DOS | 14d | 2027-03-10 | 2027-03-23 | RHD4PRLOLMAFLFS1400 |  | -68d |
| RHD4PRLOLDOSLFS1500 |  | Delivery for JIB Crane - LOL-DOS | 14d | 2027-03-10 | 2027-03-23 | RHD4PRLOLMAFLFS1500 |  | -54d |
| RHD4PRLOLDOSLFS1600 |  | Delivery for Standby Diesel Generator - LOL-DOS | 14d | 2027-03-10 | 2027-03-23 | RHD4PRLOLMAFLFS1600 |  | -62d |
| RHD4PRLOLDOSLFS2000 |  | Delivery for Isolation Penstock - LOL-DOS | 14d | 2027-03-10 | 2027-03-23 | RHD4PRLOLMAFLFS2000 |  | -62d |
| RHD4PRLOLDOSLFS1100 |  | Delivery for Submersible pumps - LOL-DOS | 14d | 2027-03-26 | 2027-04-08 | RHD4PRLOLMAFLFS1100 |  | -32d |
| RHD4PRLOLDOSLFS1700 |  | Delivery for Programmable Logic Controllers and Instrumentation for Process Systems - LOL-DOS | 14d | 2027-04-02 | 2027-04-15 | RHD4PRLOLMAFLFS1700 |  | -83d |
|  | 1 | **RHD4-02-002-Long Lead Items - LOL-Stageing Time - STAG** |  | 2027-03-24 | 2027-04-28 |  |  |  |
|  | 1 | **RHD4-02-002-LOL-Material Delivery on Site - DOS -Medium Voltage Network - MV** |  | 2027-04-23 | 2027-04-28 |  |  |  |
| RHD4PRLOLSTAGMV1601 |  | Staging time for Unit Substations - LOL-STAG | 6d | 2027-04-23 | 2027-04-28 | RHD4PRLOLMAFMV1500, RHD4PRLOLDOSMV1500 |  | -100d |
| RHD4PRLOLSTAGMV1602 |  | Staging time for Ring Main Unit (RMU) - LOL-STAG | 6d | 2027-04-23 | 2027-04-28 | RHD4PRLOLMAFMV1600, RHD4PRLOLDOSMV1600 |  | -100d |
|  | 135 | **RHD4-02-002-LOL-Material Delivery on Site - DOS -Security Network - CCTV** |  | 2027-04-07 | 2027-04-12 |  |  |  |
| RHD4PRLOLSTACCTV1001 |  | Staging time for CCTV Control Room Components - LOL-STAG | 6d | 2027-04-07 | 2027-04-12 | RHD4PRLOLMAFCCTV1000, RHD4PRLOLDOSCCTV1000 |  | -115d |
|  | 136 | **RHD4-02-002-LOL-Material Delivery on Site - DOS -Lift Stations - LFS** |  | 2027-03-24 | 2027-04-21 |  |  |  |
| RHD4PRLOLSTAGLFS1000 |  | Staging time for Screening Container - LOL-STAG | 6d | 2027-03-24 | 2027-03-29 | RHD4PRLOLDOSLFS1000 |  | -44d |
| RHD4PRLOLSTAGLFS1200 |  | Staging time for Magnetic type flowmeter - LOL-STAG | 6d | 2027-03-24 | 2027-03-29 | RHD4PRLOLDOSLFS1200 |  | -68d |
| RHD4PRLOLSTAGLFS1300 |  | Staging time for Surge Tank - LOL-STAG | 6d | 2027-03-24 | 2027-03-29 | RHD4PRLOLDOSLFS1300 |  | -68d |
| RHD4PRLOLSTAGLFS1400 |  | Staging time for Odours scrubbing system - LOL-STAG | 6d | 2027-03-24 | 2027-03-29 | RHD4PRLOLDOSLFS1400 |  | -68d |
| RHD4PRLOLSTAGLFS1500 |  | Staging time for JIB Crane - LOL-STAG | 6d | 2027-03-24 | 2027-03-29 | RHD4PRLOLDOSLFS1500 |  | -54d |
| RHD4PRLOLSTAGLFS1600 |  | Staging time for Standby Diesel Generator - LOL-STAG | 6d | 2027-03-24 | 2027-03-29 | RHD4PRLOLDOSLFS1600 |  | -62d |
| RHD4PRLOLSTAGLFS2000 |  | Staging time for Isolation Penstock - LOL-STAG | 6d | 2027-03-24 | 2027-03-29 | RHD4PRLOLDOSLFS2000 |  | -62d |
| RHD4PRLOLSTAGLFS1100 |  | Staging time for Submersible pumps - LOL-STAG | 6d | 2027-04-09 | 2027-04-14 | RHD4PRLOLDOSLFS1100 |  | -32d |
| RHD4PRLOLSTAGLFS1700 |  | Staging time for Programmable Logic Controllers and Instrumentation for Process Systems - LOL-STAG | 6d | 2027-04-16 | 2027-04-21 | RHD4PRLOLDOSLFS1700 |  | -83d |
|  | 98 | **RHD4-02-002-Short Lead Items - SHL** |  | 2025-12-31 | 2027-02-19 |  |  |  |
|  | 99 | **RHD4-02-002-Short Lead Items - SHL-Material Purchase Order - PO** |  | 2025-12-31 | 2026-12-14 |  |  |  |
|  | 100 | **RHD4-02-002-SHL-Material Purchase Order - PO-Storm Network - ST** |  | 2026-01-28 | 2026-10-18 |  |  |  |
| RHD4PRSHLPOST1000 |  | Material Purchase Order for GRP pipes - SHL-ST | 11d | 2026-01-28 A | 2026-02-09 A | RHD4ENSWL1APPARC1100, RHD4ENSWL1APPMEC1200, RHD4ENSTL1APPARC1100, RHD4ENSTL1APPMEC1200, RHD4GNPERMITAT2000, RHD4ENTUN1APPSTC1100, RHD4ENTUN1APPSTC1200, RHD4ENSDZ9APPRD220, RHD4ENSDZ7APPRD220, RHD4ENSDZ5APPRD220, RHD4ENMARAPPST100 | 100% |  |
| RHD4PRSHLPOST1100 |  | Material Purchase Order for UPVC pipes - SHL-ST | 3d | 2026-02-01 A | 2026-02-03 A | RHD4ENMARAPPST200 | 100% |  |
| RHD4PRSHLPOST1200 |  | Material Purchase Order for HDPE pipes - SHL-ST | 6d | 2026-02-04 A | 2026-03-29 A | RHD4PRSHLPOST1100, RHD4PRSHLPOST1000, RHD4ENMARAPPST300 | 100% |  |
| RHD4PRSHLPOST1300 |  | Material Purchase Order for Catch basin - SHL-ST | 6d | 2026-03-29 A | 2026-04-04 A | RHD4PRSHLPOST1100, RHD4PRSHLPOST1000, RHD4ENMARAPPST400 | 100% |  |
| RHD4PRSHLPOST1500 |  | Material Purchase Order for Tensile reinforcement steel - SHL-ST | 6d | 2026-06-01 A | 2026-06-07 A | RHD4ENMARAPPST600 | 100% |  |
| RHD4PRSHLPOST1600 |  | Material Purchase Order for Precast Concrete - SHL-ST | 6d | 2026-06-01 A | 2026-06-07 A | RHD4ENMARAPPST700 | 100% |  |
| RHD4PRSHLPOST1700 |  | Material Purchase Order for Metal Works (Stairs - Manhole Covers) - SHL-ST | 6d | 2026-09-09 A | 2026-09-15 A | RHD4PRSHLPOST1300, RHD4ENMARAPPST800 | 100% |  |
| RHD4PRSHLPOST1400 |  | Material Purchase Order for Grouted Riprap - SHL-ST | 6d | 2026-10-12 A | 2026-10-18 A | RHD4PRSHLPOST1700, RHD4ENMARAPPST500 | 100% |  |
|  | 101 | **RHD4-02-002-SHL-Material Purchase Order - PO-Sewage Network - SW** |  | 2025-12-31 | 2026-10-07 |  |  |  |
| RHD4PRSHLPOSW1100 |  | Material Purchase Order for GRP pipes - SHL-SW | 6d | 2025-12-31 A | 2026-02-12 A | RHD4ENMARAPPSW200 | 100% |  |
| RHD4PRSHLPOSW1000 |  | Material Purchase Order for UPVC pipes - SHL-SW | 6d | 2026-01-07 A | 2026-02-03 A | RHD4ENMARAPPSW100 | 100% |  |
| RHD4PRSHLPOSW1200 |  | Material Purchase Order for Valves - SHL-SW | 6d | 2026-01-14 A | 2026-02-07 A | RHD4ENMARAPPSW300 | 100% |  |
| RHD4PRSHLPOSW1500 |  | Material Purchase Order for HDPE pipes - SHL-SW | 6d | 2026-01-21 A | 2026-03-29 A | RHD4ENMARAPPSW600 | 100% |  |
| RHD4PRSHLPOSW1300 |  | Material Purchase Order for Precast Concrete - SHL-SW | 6d | 2026-08-01 A | 2026-08-06 A | RHD4ENMARAPPSW400 | 100% |  |
| RHD4PRSHLPOSW1400 |  | Material Purchase Order for Metal Works (Stairs - Manhole Covers) - SHL-SW | 6d | 2026-10-01 A | 2026-10-07 A | RHD4ENMARAPPSW500 | 100% |  |
|  | 102 | **RHD4-02-002-SHL-Material Purchase Order - PO-Potable Water Network - PT** |  | 2026-01-07 | 2026-10-21 |  |  |  |
| RHD4PRSHLPOPT1000 |  | Material Purchase Order for HDPE pipes - SHL-PT | 6d | 2026-01-07 A | 2026-03-29 A | RHD4ENMARAPPPT100 | 100% |  |
| RHD4PRSHLPOPT1100 |  | Material Purchase Order for Valves - SHL-PT | 6d | 2026-01-24 A | 2026-02-26 A | RHD4ENMARAPPPT200 | 100% |  |
| RHD4PRSHLPOPT1500 |  | Material Purchase Order for Metal Works (Chamber's Covers) - SHL-PT | 6d | 2026-08-04 A | 2026-08-10 A | RHD4ENMARAPPPT600 | 100% |  |
| RHD4PRSHLPOPT1300 |  | Material Purchase Order for Precast Concrete - SHL-PT | 6d | 2026-08-20 A | 2026-08-26 A | RHD4ENMARAPPPT400 | 100% |  |
| RHD4PRSHLPOPT1200 |  | Material Purchase Order for Fire Hydrants - SHL-PT | 6d | 2026-10-01 A | 2026-10-07 A | RHD4ENMARAPPPT300 | 100% |  |
| RHD4PRSHLPOPT1400 |  | Material Purchase Order for Stem and Surface box - SHL-PT | 6d | 2026-10-15 A | 2026-10-21 A | RHD4ENMARAPPPT500 | 100% |  |
|  | 103 | **RHD4-02-002-SHL-Material Purchase Order - PO-Irrigation Network - IRR** |  | 2026-01-07 | 2026-10-08 |  |  |  |
| RHD4PRSHLPOIRR1000 |  | Material Purchase Order for HDPE pipes - SHL-IRR | 6d | 2026-01-07 A | 2026-03-29 A | RHD4ENMARAPPIRR100 | 100% |  |
| RHD4PRSHLPOIRR1100 |  | Material Purchase Order for Valves - SHL-IRR | 6d | 2026-01-26 A | 2026-02-26 A | RHD4ENMARAPPIRR200 | 100% |  |
| RHD4PRSHLPOIRR1300 |  | Material Purchase Order for Stem and Surface box - SHL-IRR | 6d | 2026-07-18 A | 2026-07-23 A | RHD4ENMARAPPIRR400 | 100% |  |
| RHD4PRSHLPOIRR1200 |  | Material Purchase Order for Precast Concrete - SHL-IRR | 6d | 2026-08-20 A | 2026-08-26 A | RHD4ENMARAPPIRR300 | 100% |  |

| ID | WBS | Task | Duration | Start | Finish | Predecessors | Complete | Total float |
| --- | --- | --- | --- | --- | --- | --- | --- | --- |
| RHD4PRSHLPOIRR1400 |  | Material Purchase Order for Metal Works (Chamber's Covers) - SHL-IRR | 6d | 2026-10-03 A | 2026-10-08 A | RHD4ENMARAPPIRR500 | 100% |  |
|  | 104 | **RHD4-02-002-SHL-Material Purchase Order - PO-Medium Voltage - MV** |  | 2026-01-14 | 2026-12-07 |  |  |  |
| RHD4PRSHLPOMV1000 |  | Material Purchase Order for UPVC Pipes for Duct Banks - SHL-MV | 17d | 2026-01-14 A | 2026-02-02 A | RHD4ENMARAPPMV100 | 100% |  |
| RHD4PRSHLPOMV1100 |  | Material Purchase Order for Medium Voltage Cable 3Cx500 mm2 - SHL-MV | 6d | 2026-12-01 | 2026-12-07 | RHD4ENMARAPPMV200 |  | -192d |
| RHD4PRSHLPOMV1200 |  | Material Purchase Order for Medium Voltage Cable 3Cx50 mm2 - SHL-MV | 6d | 2026-12-01 | 2026-12-07 | RHD4ENMARAPPMV300 |  | -192d |
| RHD4PRSHLPOMV1300 |  | Material Purchase Order for Straight Joints 3Cx50 mm2 - SHL-MV | 6d | 2026-12-01 | 2026-12-07 | RHD4ENMARAPPMV400 |  | -192d |
| RHD4PRSHLPOMV1400 |  | Material Purchase Order for Normally Open Points (Outdoor type) - SHL-MV | 6d | 2026-12-01 | 2026-12-07 | RHD4ENMARAPPMV500 |  | -192d |
|  | 105 | **RHD4-02-002-SHL-Material Purchase Order - PO-Low Voltage - LV** |  | 2026-01-14 | 2026-11-30 |  |  |  |
| RHD4PRSHLPOLV1000 |  | Material Purchase Order for UPVC Pipes for Duct Banks - SHL-LV | 17d | 2026-01-14 A | 2026-02-02 A | RHD4ENMARAPPLV100 | 100% |  |
| RHD4PRSHLPOLV1100 |  | Material Purchase Order for Low voltage Cables - SHL-LV | 6d | 2026-08-27 A | 2026-09-02 A | RHD4ENMARAPPLV200 | 100% |  |
| RHD4PRSHLPOLV1200 |  | Material Purchase Order for Distribution Pillars - SHL-LV | 6d | 2026-11-24 | 2026-11-30 | RHD4ENMARAPPLV300 |  | -186d |
| RHD4PRSHLPOLV1300 |  | Material Purchase Order for KWH Meter mounting Frame - SHL-LV | 6d | 2026-11-24 | 2026-11-30 | RHD4ENMARAPPLV400 |  | -186d |
| RHD4PRSHLPOLV1400 |  | Material Purchase Order for Low Voltage Drawpit - SHL-LV | 6d | 2026-11-24 | 2026-11-30 | RHD4ENMARAPPLV500 |  | -176d |
| RHD4PRSHLPOLV1500 |  | Material Purchase Order for Earthing for Pillars and Panels - SHL-LV | 6d | 2026-11-24 | 2026-11-30 | RHD4ENMARAPPLV600 |  | -182.02d |
|  | 106 | **RHD4-02-002-SHL-Material Purchase Order - PO-Street Lighting Network -SL** |  | 2026-01-15 | 2026-10-06 |  |  |  |
| RHD4PRSHLPOSL1000 |  | Material Purchase Order for UPVC Pipes for Duct Banks - SHL-SL | 16d | 2026-01-15 A | 2026-02-02 A | RHD4ENMARAPPSL100 | 100% |  |
| RHD4PRSHLPOSL1200 |  | Material Purchase Order for Lighting Poles - SHL-SL | 6d | 2026-08-20 A | 2026-08-26 A | RHD4ENMARAPPSL300 | 100% |  |
| RHD4PRSHLPOSL1400 |  | Material Purchase Order for Street Lighting Drawpit - SHL-SL | 6d | 2026-09-17 A | 2026-09-24 A | RHD4ENMSSL2000, RHD4ENMARAPPSL500 | 100% |  |
| RHD4PRSHLPOSL1300 |  | Material Purchase Order for Street Lighting Luminaire - SHL-SL | 6d | 2026-09-27 A | 2026-10-03 A | RHD4ENMARAPPSL400 | 100% |  |
| RHD4PRSHLPOSL1100 |  | Material Purchase Order for Street Lighting Cables - SHL-SL | 6d | 2026-09-30 A | 2026-10-06 A | RHD4ENMARAPPSL200 | 100% |  |
|  | 107 | **RHD4-02-002-SHL-Material Purchase Order - PO-Landscape Network - LS** |  |  |  |  |  |  |
|  | 108 | **RHD4-02-002-SHL-Material Purchase Order - PO-Telecommunications Network - TC** |  | 2026-01-22 | 2026-09-07 |  |  |  |
| RHD4PRSHLPOTC1100 |  | Material Purchase Order for HDPE Road Crossings Ducts - SHL-TC | 11d | 2026-01-22 A | 2026-03-29 A | RHD4PRSHLPOSL1000, RHD4ENMARAPPTC200 | 100% |  |
| RHD4PRSHLPOTC1000 |  | Material Purchase Order for HDPE Ducts - SHL-TC | 11d | 2026-01-29 A | 2026-03-29 A | RHD4PRSHLPOTC1100, RHD4ENMARAPPTC100 | 100% |  |
| RHD4PRSHLPOTC1200 |  | Material Purchase Order for Telecommunications Manhole - SHL-TC | 6d | 2026-09-01 A | 2026-09-07 A | RHD4PRSHLPOTC1000, RHD4ENMARAPPTC300 | 100% |  |
|  | 109 | **RHD4-02-002-SHL-Material Purchase Order - PO-Information and Communication Technologies - ICT** |  | 2026-01-22 | 2026-03-29 |  |  |  |
| RHD4PRSHLPOICT1100 |  | Material Purchase Order for HDPE Road Crossings Ducts - SHL-ICT | 7d | 2026-01-22 A | 2026-03-29 A | RHD4PRSHLPOSL1000, RHD4ENMARAPPICT200 | 100% |  |
| RHD4PRSHLPOICT1000 |  | Material Purchase Order for HDPE Ducts - SHL-ICT | 7d | 2026-01-29 A | 2026-03-29 A | RHD4PRSHLPOICT1100, RHD4ENMARAPPICT100 | 100% |  |
| RHD4PRSHLPOICT1200 |  | Material Purchase Order for Telecommunications Manhole - SHL-ICT | 7d | 2026-02-05 A | 2026-03-29 A | RHD4PRSHLPOICT1000, RHD4PRSHLPOSL1100, RHD4ENMARAPPICT300 | 100% |  |
|  | 110 | **RHD4-02-002-SHL-Material Purchase Order - PO-Security Network - CCTV** |  | 2026-11-17 | 2026-12-14 |  |  |  |
| RHD4PRSHLPOCCTV1000 |  | Material Purchase Order for CCTV Network Poles - SHL-CCTV | 6d | 2026-11-17 | 2026-11-23 | RHD4PRSHLPOLV1000, RHD4ENMARAPPCCTV100 |  | -194.02d |
| RHD4PRSHLPOCCTV1200 |  | Material Purchase Order for CCTV Panels and Panel's Components - SHL-CCTV | 6d | 2026-11-24 | 2026-11-30 | RHD4PRSHLPOCCTV1000, RHD4ENMARAPPCCTV300 |  | -194.02d |
| RHD4PRSHLPOCCTV1300 |  | Material Purchase Order for CCTV Fiber Optic Cables - SHL-CCTV | 6d | 2026-12-01 | 2026-12-07 | RHD4PRSHLPOCCTV1200, RHD4ENMARAPPCCTV400 |  | -194.02d |
| RHD4PRSHLPOCCTV1100 |  | Material Purchase Order for CCTV Network Cameras - SHL-CCTV | 6d | 2026-12-08 | 2026-12-14 | RHD4PRSHLPOCCTV1300, RHD4ENMSRR2010, RHD4ENMSER2010, RHD4ENMSASPH2010, RHD4ENSWL1APPELE1300, RHD4ENMARAPPCCTV200 |  | -194.02d |
|  | 111 | **RHD4-02-002-SHL-Material Purchase Order - PO-Road Works - RD** |  | 2026-08-11 | 2026-12-07 |  |  |  |
| RHD4PRSHLPORD1100 |  | Material Purchase Order for Bituminous Asphalt Layers - SHL-RD | 6d | 2026-08-11 A | 2026-08-17 A | RHD4PRSHLPORD1000, RHD4ENMARAPPRD200 | 100% |  |
| RHD4PRSHLPORD1000 |  | Material Purchase Order for Aggregate Base Courses - SHL-RD | 6d | 2026-08-20 A | 2026-08-26 A | RHD4ENMARAPPRD100 | 100% |  |
| RHD4PRSHLPORD1200 |  | Material Purchase Order for Precast Concrete Curbstone - SHL-RD | 6d | 2026-10-01 A | 2026-10-07 A | RHD4PRSHLPORD1100, RHD4ENMARAPPRD300 | 100% |  |
| RHD4PRSHLPORD1600 |  | Material Purchase Order for Traffic Signage - SHL-RD | 6d | 2026-11-10 | 2026-11-16 | RHD4PRSHLPORD1200, RHD4ENMARAPPRD700 |  | -188.02d |
| RHD4PRSHLPORD1300 |  | Material Purchase Order for Interlock Precast Concrete Unit Paving - SHL-RD | 6d | 2026-11-17 | 2026-11-23 | RHD4PRSHLPORD1600, RHD4ENMARAPPRD400 |  | -188.02d |
| RHD4PRSHLPORD1400 |  | Material Purchase Order for Wheel Stopper - SHL-RD | 6d | 2026-11-24 | 2026-11-30 | RHD4PRSHLPORD1300, RHD4ENMARAPPRD500 |  | -188.02d |
| RHD4PRSHLPORD1500 |  | Material Purchase Order for Pavement Marking - SHL-RD | 6d | 2026-12-01 | 2026-12-07 | RHD4PRSHLPORD1400, RHD4ENMARAPPRD600 |  | -188.02d |
|  | 112 | **RHD4-02-002-SHL-Material Purchase Order - PO-Lift Stations - LFS** |  | 2026-06-01 | 2026-12-07 |  |  |  |
| RHD4PRSHLPOLFS1200 |  | Material Purchase Order for Bituminous Sheet Waterproofing - SHL-LFS | 6d | 2026-06-01 A | 2026-06-07 A | RHD4PRSHLPOLFS1100, RHD4ENMARAPPLFS300 | 100% |  |
| RHD4PRSHLPOLFS1700 |  | Material Purchase Order for Ductile Iron Pipes & Fittings - SHL-LFS | 6d | 2026-08-11 A | 2026-08-17 A | RHD4ENMARAPPLFS800 | 100% |  |
| RHD4PRSHLPOLFS1800 |  | Material Purchase Order for Sewage Lift Station Valves - SHL-LFS | 6d | 2026-08-18 A | 2026-08-24 A | RHD4PRSHLPOLFS1700, RHD4ENMARAPPLFS900 | 100% |  |
| RHD4PRSHLPOLFS1900 |  | Material Purchase Order for Basket screen - SHL-LFS | 6d | 2026-09-27 A | 2026-10-03 A | RHD4ENMARAPPLFS1400 | 100% |  |
| RHD4PRSHLPOLFS2600 |  | Material Purchase Order for Low Voltage Cables - SHL-LFS | 6d | 2026-10-01 A | 2026-10-07 A | RHD4PRSHLPOLFS1800, RHD4ENMARAPPLFS2400 | 100% |  |
| RHD4PRSHLPOLFS2700 |  | Material Purchase Order for Lighting Fixtures - SHL-LFS | 6d | 2026-10-13 A | 2026-10-19 A | RHD4ENMARAPPLFS2500 | 100% |  |
| RHD4PRSHLPOLFS1100 |  | Material Purchase Order for Roof Waterproofing System - SHL-LFS | 6d | 2026-11-10 | 2026-11-16 | RHD4ENMARAPPLFS200 |  | -180d |
| RHD4PRSHLPOLFS1600 |  | Material Purchase Order for Epoxy Coating - SHL-LFS | 6d | 2026-11-10 | 2026-11-16 | RHD4ENMARAPPLFS700 |  | -174d |
| RHD4PRSHLPOLFS2100 |  | Material Purchase Order for UPVC Pipes for Sanitary Drain - SHL-LFS | 6d | 2026-11-10 | 2026-11-16 | RHD4ENMARAPPLFS1800 |  | -174d |
| RHD4PRSHLPOLFS2300 |  | Material Purchase Order for Motor Control Center (MCC) - SHL-LFS | 12d | 2026-11-10 | 2026-11-23 | RHD4ENMARAPPLFS2000 |  | -180d |
| RHD4PRSHLPOLFS2400 |  | Material Purchase Order for lighting and power panel boards - SHL-LFS | 6d | 2026-11-10 | 2026-11-16 | RHD4ENMARAPPLFS2100 |  | -174d |
| RHD4PRSHLPOLFS3000 |  | Material Purchase Order for Fire Alarm System - SHL-LFS | 6d | 2026-11-10 | 2026-11-16 | RHD4ENMARAPPLFS2900 |  | -174d |
| RHD4PRSHLPOLFS1300 |  | Material Purchase Order for Fluid-Applied Waterproofing - SHL-LFS | 6d | 2026-11-17 | 2026-11-23 | RHD4PRSHLPOLFS1200, RHD4ENSTL1APPELE1300, RHD4ENMARAPPLFS400 |  | -180d |
| RHD4PRSHLPOLFS2800 |  | Material Purchase Order for Wiring Devices - SHL-LFS | 6d | 2026-11-17 | 2026-11-23 | RHD4ENMARAPPLFS2600 |  | -180d |
| RHD4PRSHLPOLFS1000 |  | Material Purchase Order for Metal Ladder and checkered Plate - SHL-LFS | 6d | 2026-11-24 | 2026-11-30 | RHD4ENMARAPPLFS100 |  | -182.02d |
| RHD4PRSHLPOLFS1400 |  | Material Purchase Order for Metal Doors and Access Doors and Frames - SHL-LFS | 6d | 2026-11-24 | 2026-11-30 | RHD4ENMARAPPLFS500 |  | -186d |
| RHD4PRSHLPOLFS2200 |  | Material Purchase Order for wall mounted Split/AC - SHL-LFS | 6d | 2026-11-24 | 2026-11-30 | RHD4ENMARAPPLFS1900 |  | -186d |
| RHD4PRSHLPOLFS2900 |  | Material Purchase Order for Enclosed Switches and Circuit Breakers - SHL-LFS | 6d | 2026-11-24 | 2026-11-30 | RHD4ENMARAPPLFS2700 |  | -192d |
| RHD4PRSHLPOLFS1500 |  | Material Purchase Order for Painting - SHL-LFS | 6d | 2026-12-01 | 2026-12-07 | RHD4ENMARAPPLFS600 |  | -192d |
| RHD4PRSHLPOLFS2500 |  | Material Purchase Order for Earthing for Lift Stations - SHL-LFS | 6d | 2026-12-01 | 2026-12-07 | RHD4ENMARAPPLFS2200 |  | -192d |
| RHD4PRSHLPOLFS3100 |  | Material Purchase Order for Fences and Gates - SHL-LFS | 6d | 2026-12-01 | 2026-12-07 | RHD4ENMARAPPLFS3000, RHD4PRSHLPOLFS2900 |  | -192d |
|  | 113 | **RHD4-02-002-Short Lead Items - SHL-Material Delivery on Site - DOS** |  | 2026-01-14 | 2027-02-13 |  |  |  |
|  | 114 | **RHD4-02-002-SHL-Material Delivery on Site - DOS -Storm Network - ST** |  | 2026-02-16 | 2026-12-25 |  |  |  |
|  | 1 | **RHD4-02-002-SHL-Material Delivery on Site - DOS -Storm Network - ST - Zone 1** |  | 2026-03-01 | 2026-10-18 |  |  |  |
| RHD4PRSHLDOSST1000 |  | Delivery for GRP pipes Zone 1 - SHL-DOS(Completed) | 30d | 2026-03-01 A | 2026-08-03 A | RHD4PRSHLDOSST1306, RHD4PRSHLDOSST1001 SS, RHD4CZ6A015ST3501, RHD4CZ5A014ST3501, RHD4CZ3L122RW2000, RHD4PRSHLSTAGSL1100, RHD4PRSHLPOST1000 | 100% |  |
| RHD4PRSHLDOSST1100 |  | Delivery for UPVC pipes Zone 1 - SHL-DOS | 6d | 2026-09-01 A | 2026-09-06 A | RHD4PRSHLDOSST1600, RHD4PRSHLPOST1100 | 100% |  |
| RHD4PRSHLDOSST1300 |  | Delivery for Catch basin Zone 1 - SHL-DOS | 6d | 2026-09-18 A | 2026-09-23 A | RHD4PRSHLDOSST1600, RHD4PRSHLPOST1000, RHD4PRSHLDOSST1000, RHD4PRSHLPOST1300 | 100% |  |

| ID | WBS | Task | Duration | Start | Finish | Predecessors | Complete | Total float |
| --- | --- | --- | --- | --- | --- | --- | --- | --- |
| RHD4PRSHLDOSST1600 |  | Delivery for Precast Concrete Zone 1 - SHL-DOS | 6d | 2026-09-22 A | 2026-09-27 A | RHD4PRSHLPOST1600 | 100% |  |
| RHD4PRSHLDOSST1700 |  | Delivery for Metal Works (Stairs - Manhole Covers) Zone 1 - SHL-DOS | 6d | 2026-10-05 A | 2026-10-10 A | RHD4PRSHLPOST1700 | 100% |  |
| RHD4PRSHLDOSST1400 |  | Delivery for Grouted Riprap Zone 1 - SHL-DOS | 6d | 2026-10-13 A | 2026-10-18 A | RHD4PRSHLPOST1400 | 100% |  |
|  | 2 | **RHD4-02-002-SHL-Material Delivery on Site - DOS -Storm Network - ST - Zone 2** |  | 2026-02-16 | 2026-11-22 |  |  |  |
| RHD4PRSHLDOSST1001 |  | Delivery for GRP pipes Zone 2 - SHL-DOS(Completed) | 30d | 2026-02-16 A | 2026-08-03 A | RHD4PRSHLPOST1000, RHD4PRSHLSTAGST1003, RHD4PRSHLDOSST1702, RHD4PRSHLDOSST1302 | 100% |  |
| RHD4PRSHLDOSST1501 |  | Delivery for Tensile reinforcement steel Zone 2 - SHL-DOS | 6d | 2026-06-08 A | 2026-06-13 A | RHD4PRSHLPOST1500 | 100% |  |
| RHD4PRSHLDOSST1601 |  | Delivery for Precast Concrete Zone 2 - SHL-DOS | 6d | 2026-09-05 A | 2026-09-10 A | RHD4PRSHLPOST1600 | 100% |  |
| RHD4PRSHLDOSST1101 |  | Delivery for UPVC pipes Zone 2 - SHL-DOS | 6d | 2026-09-30 A | 2026-10-05 A | RHD4PRSHLPOST1100 | 100% |  |
| RHD4PRSHLDOSST1301 |  | Delivery for Catch basin Zone 2 - SHL-DOS | 6d | 2026-10-07 A | 2026-10-12 A | RHD4PRSHLPOST1300, RHD4PRSHLDOSST1101, RHD4PRSHLPOST1000, RHD4PRSHLDOSST1001 | 100% |  |
| RHD4PRSHLDOSST1701 |  | Delivery for Metal Works (Stairs - Manhole Covers) Zone 2 - SHL-DOS | 6d | 2026-11-10 | 2026-11-15 | RHD4PRSHLPOST1700 |  | -196.02d |
| RHD4PRSHLDOSST1401 |  | Delivery for Grouted Riprap Zone 2 - SHL-DOS | 6d | 2026-11-17 | 2026-11-22 | RHD4PRSHLPOST1400 |  | -203.02d |
|  | 3 | **RHD4-02-002-SHL-Material Delivery on Site - DOS -Storm Network - ST - Zone 3** |  | 2026-09-03 | 2026-11-15 |  |  |  |
| RHD4PRSHLDOSST1602 |  | Delivery for Precast Concrete Zone 3 - SHL-DOS | 6d | 2026-09-03 A | 2026-09-08 A | RHD4PRSHLPOST1600 | 100% |  |
| RHD4PRSHLDOSST1102 |  | Delivery for UPVC pipes Zone 3 - SHL-DOS | 6d | 2026-09-09 A | 2026-09-14 A | RHD4PRSHLPOST1100, RHD4PRSHLDOSST1602 | 100% |  |
| RHD4PRSHLDOSST1302 |  | Delivery for Catch basin Zone 3 - SHL-DOS | 6d | 2026-09-12 A | 2026-09-17 A | RHD4PRSHLPOST1300, RHD4PRSHLDOSST1602, RHD4PRSHLPOST1000, RHD4PRSHLDOSST1008 SS, RHD4PRSHLDOSST1608, RHD4PRSHLDOSST1008, RHD4PRSHLDOSST1604, RHD4PRSHLDOSST1004, RHD4PRSHLDOSST1003 | 100% |  |
| RHD4PRSHLDOSST1702 |  | Delivery for Metal Works (Stairs - Manhole Covers) Zone 3 - SHL-DOS | 6d | 2026-11-10 | 2026-11-15 | RHD4PRSHLPOST1700 |  | -196.02d |
|  | 4 | **RHD4-02-002-SHL-Material Delivery on Site - DOS -Storm Network - ST - Zone 4** |  | 2026-02-16 | 2026-11-15 |  |  |  |
| RHD4PRSHLDOSST1003 |  | Delivery for GRP pipes Zone 4 - SHL-DOS(Completed) | 30d | 2026-02-16 A | 2026-08-03 A | RHD4PRSHLPOST1000, RHD4PRSHLDOSST1008 | 100% |  |
| RHD4PRSHLDOSST1103 |  | Delivery for UPVC pipes Zone 4 - SHL-DOS | 6d | 2026-09-03 A | 2026-09-08 A | RHD4PRSHLPOST1100, RHD4PRSHLDOSST1603 | 100% |  |
| RHD4PRSHLDOSST1303 |  | Delivery for Catch basin Zone 4 - SHL-DOS | 6d | 2026-09-03 A | 2026-09-08 A | RHD4PRSHLPOST1300 | 100% |  |
| RHD4PRSHLDOSST1603 |  | Delivery for Precast Concrete Zone 4 - SHL-DOS | 6d | 2026-09-03 A | 2026-09-08 A | RHD4PRSHLPOST1600 | 100% |  |
| RHD4PRSHLDOSST1703 |  | Delivery for Metal Works (Stairs - Manhole Covers) Zone 4 - SHL-DOS | 6d | 2026-11-10 | 2026-11-15 | RHD4PRSHLPOST1700, RHD4PRSHLDOSST1303 |  | -196.02d |
|  | 5 | **RHD4-02-002-SHL-Material Delivery on Site - DOS -Storm Network - ST - Zone 5** |  | 2026-02-16 | 2026-12-25 |  |  |  |
| RHD4PRSHLDOSST1004 |  | Delivery for GRP pipes Zone 5 - SHL-DOS(Completed) | 30d | 2026-02-16 A | 2026-08-03 A | RHD4PRSHLPOST1000, RHD4PRSHLDOSST1005, RHD4PRSHLSTAGST1600, RHD4PRSHLSTAGST1101, RHD4PRSHLSTAGST1607, RHD4PRSHLSTAGSW1300, RHD4PRSHLSTAGSW1301, RHD4PRSHLSTAGSW1003, RHD4PRSHLSTAPTCr1000, RHD4PRSHLSTAGLFS1100, RHD4PRSHLSTAGLFS1300, RHD4PRSHLSTAGLFS1400, RHD4PRSHLSTAGLFS1500, RHD4PRSHLSTAGLFS1600, RHD4PRSHLSTAGLFS1700, RHD4PRSHLSTAGLFS1800, RHD4PRSHLSTAGLFS1900, RHD4PRSHLSTAGLFS2100, RHD4PRSHLSTAGLFS2200, RHD4PRSHLSTAGLFS2300, RHD4PRSHLSTAGLFS2500, RHD4PRSHLSTAGLFS2600, RHD4PRSHLSTAGLFS2800, RHD4PRSHLSTAGLFS2900, RHD4PRSHLSTAGLFS3100, RHD4PRSHLPOSL1200, RHD4PRSHLPOSL1400, RHD4PRSHLSTAGLS1000, RHD4PRSHLSTAGLFS2400, RHD4PRSHLSTAGLFS1200, RHD4PRSHLSTAGSW1407, RHD4PRSHLSTAGSW1404, RHD4PRSHLSTAGSW1308, RHD4PRSHLSTAGSW1408, RHD4PRSHLSTAGSW1401, RHD4PRSHLSTAGST1602, RHD4PRSHLSTAGST1603, RHD4PRSHLSTAGST1303, RHD4PRSHLSTAGST1606, RHD4PRSHLSTAIRRC1000, RHD4PRSHLSTAGST1601, RHD4PRSHLSTAGRD1600, RHD4PRSHLSTAGRD1200, RHD4CZ8L04RW3000, RHD4CZ9L06RW3000, RHD4CZ6RA01RA3000, RHD4PRSHLSTAGMV1000, RHD4PRSHLSTAGST1105, RHD4PRSHLSTAGMV1400, RHD4PRSHLSTAGPT1200, RHD4PRSHLSTAGLV1200, RHD4PRSHLSTAGLV1300, RHD4PRSHLSTAGLV1000, RHD4PRSHLSTAGSW1305, RHD4PRSHLSTAGLV1100, RHD4PRSHLSTAGST1305, RHD4PRSHLSTAGMV1300, RHD4PRSHLSTAGMV1100, RHD4PRSHLSTAGMV1200, RHD4PRSHLSTAGST1605, RHD4PRSHLSTAGRD1100, RHD4PRSHLSTAGRD1000, RHD4CZ6C062RW3000, RHD4PRSHLSTAGIRR1000, RHD4PRSHLSTAGST1104, RHD4PRSHLSTAGST1604 | 100% |  |
| RHD4PRSHLDOSST1604 |  | Delivery for Precast Concrete Zone 5 - SHL-DOS | 6d | 2026-06-08 A | 2026-10-31 A | RHD4PRSHLPOST1600 | 100% |  |
| RHD4PRSHLDOSST1504 |  | Delivery for Tensile reinforcement steel Zone 5 - SHL-DOS | 6d | 2026-06-15 A | 2026-06-20 A | RHD4PRSHLPOST1500, RHD4PRSHLDOSST1501 | 100% |  |
| RHD4PRSHLDOSST1104 |  | Delivery for UPVC pipes Zone 5 - SHL-DOS | 6d | 2026-08-03 A | 2026-08-08 A | RHD4PRSHLPOST1100 | 100% |  |
| RHD4PRSHLDOSST1304 |  | Delivery for Catch basin Zone 5 - SHL-DOS | 6d | 2026-08-05 A | 2026-12-25 | RHD4PRSHLPOST1300, RHD4PRSHLDOSST1104, RHD4PRSHLDOSST1604, RHD4PRSHLPOST1000, RHD4PRSHLDOSST1004 | 50% | -229d |
| RHD4PRSHLDOSST1204 |  | Delivery for HDPE pipes Zone 5 - SHL-DOS | 6d | 2026-08-09 A | 2026-08-14 A | RHD4PRSHLPOST1200, RHD4PRSHLDOSST1104, RHD4PRSHLDOSST1604, RHD4PRSHLPOST1000, RHD4PRSHLDOSST1004 | 100% |  |
| RHD4PRSHLDOSST1704 |  | Delivery for Metal Works (Stairs - Manhole Covers) Zone 5 - SHL-DOS | 6d | 2026-09-16 A | 2026-09-21 A | RHD4PRSHLPOST1700 | 100% |  |
|  | 6 | **RHD4-02-002-SHL-Material Delivery on Site - DOS -Storm Network - ST - Zone 6** |  | 2026-02-16 | 2026-09-21 |  |  |  |
| RHD4PRSHLDOSST1005 |  | Delivery for GRP pipes Zone 6 - SHL-DOS(Completed) | 30d | 2026-02-16 A | 2026-08-03 A | RHD4PRSHLPOST1000, RHD4PRSHLSTAGLFS3000, RHD4PRSHLPOLV1400, RHD4GNPERMITENV3000, RHD4PRSHLPOPT1200 | 100% |  |
| RHD4PRSHLDOSST1105 |  | Delivery for UPVC pipes Zone 6 - SHL-DOS | 6d | 2026-09-03 A | 2026-09-08 A | RHD4PRSHLPOST1100 | 100% |  |
| RHD4PRSHLDOSST1305 |  | Delivery for Catch basin Zone 6 - SHL-DOS | 6d | 2026-09-03 A | 2026-09-08 A | RHD4PRSHLPOST1300 | 100% |  |
| RHD4PRSHLDOSST1605 |  | Delivery for Precast Concrete Zone 6 - SHL-DOS | 6d | 2026-09-03 A | 2026-09-08 A | RHD4PRSHLPOST1600 | 100% |  |
| RHD4PRSHLDOSST1705 |  | Delivery for Metal Works (Stairs - Manhole Covers) Zone 6 - SHL-DOS | 6d | 2026-09-16 A | 2026-09-21 A | RHD4PRSHLPOST1700 | 100% |  |
|  | 8 | **RHD4-02-002-SHL-Material Delivery on Site - DOS -Storm Network - ST - Zone 7** |  | 2026-02-16 | 2026-09-27 |  |  |  |
| RHD4PRSHLDOSST1006 |  | Delivery for GRP pipes Zone 7 - SHL-DOS(Completed) | 30d | 2026-02-16 A | 2026-08-03 A | RHD4PRSHLPOST1000, RHD4PRSHLDOSST1005 SS, RHD4PRSHLDOSST1004, RHD4CZ9C071RW3000, RHD4CZ9L02RW3000, RHD4PRSHLSTAGST1100, RHD4PRSHLSTAGST1401, RHD4PRSHLSTAGST1102, RHD4PRSHLSTAGST1107, RHD4PRSHLSTAGST1707, RHD4PRSHLSTAGSW1000, RHD4PRSHLSTAGSW1400, RHD4PRSHLSTAGSW1001, RHD4PRSHLSTAGSW1007, RHD4PRSHLSTAGSW1008, RHD4PRSHLSTAGLFS1000, RHD4PRSHLSTAGLFS2700, RHD4PRSHLSTAGST1702, RHD4PRSHLSTAGSW1103, RHD4PRSHLSTAGSW1504, RHD4PRSHLSTAGSW1108, RHD4PRSHLSTAGLV1500, RHD4PRSHLSTAGSW1405, RHD4PRSHLSTAGST1706, RHD4PRSHLSTAGST1708, RHD4PRSHLSTAPTCr1300, RHD4PRSHLSTAGST1705, RHD4PRSHLSTAGST1701, RHD4PRSHLSTAGST1504, RHD4PRSHLSTAGST1306, RHD4CZ8RA04RA3000, RHD4PRSHLSTAGST1608, RHD4PRSHLSTAGST1703, RHD4PRSHLSTAGST1103, RHD4PRSHLSTAGSW1406, RHD4PRSHLSTAGSW1306, RHD4PRSHLSTAGRD1300, RHD4PRSHLSTAGRD1400, RHD4PRSHLSTAGRD1500, RHD4PRSHLSTAGST1106, RHD4PRSHLSTAGST1501, RHD4PRSHLSTACCTV1200, RHD4PRSHLSTACCTV1100, RHD4PRSHLSTACCTV1300, RHD4PRSHLSTAGST1400, RHD4PRSHLSTACCTV1000, RHD4CZ7C032RW3000, RHD4PRSHLSTAGICT1200, RHD4PRSHLSTAGST1700, RHD4PRSHLSTAGPT1500, RHD4PRSHLSTAGPT1400, RHD4PRSHLSTAGST1108, RHD4PRSHLSTAGST1005, RHD4PRSHLSTAGSW1005, RHD4PRSHLSTAGIRR1200, RHD4PRSHLSTAGIRR1100, RHD4PRSHLSTAGSW1104, RHD4PRSHLSTAGSW1004, RHD4PRSHLSTAGST1704 | 100% |  |
| RHD4PRSHLDOSST1106 |  | Delivery for UPVC pipes Zone 7 - SHL-DOS | 6d | 2026-08-03 A | 2026-08-08 A | RHD4PRSHLPOST1100, RHD4PRSHLDOSST1606, RHD4PRSHLDOSST1105 | 100% |  |
| RHD4PRSHLDOSST1206 |  | Delivery for HDPE pipes Zone 7 - SHL-DOS | 6d | 2026-08-03 A | 2026-08-08 A | RHD4PRSHLPOST1200, RHD4PRSHLDOSST1606 | 100% |  |
| RHD4PRSHLDOSST1606 |  | Delivery for Precast Concrete Zone 7 - SHL-DOS | 6d | 2026-08-03 A | 2026-08-08 A | RHD4PRSHLPOST1600 | 100% |  |
| RHD4PRSHLDOSST1306 |  | Delivery for Catch basin Zone 7 - SHL-DOS | 6d | 2026-08-18 A | 2026-08-23 A | RHD4PRSHLPOST1300, RHD4PRSHLDOSST1305, RHD4PRSHLDOSST1606, RHD4PRSHLPOST1000, RHD4PRSHLDOSST1006, RHD4PRSHLDOSST1605, RHD4PRSHLDOSST1005, RHD4CZ2C082RW2000, RHD4CZ7A012RW3000, RHD4CZ4RA02RA3000, RHD4CZ7L03RW3000, RHD4PRSHLSTAGST1304, RHD4CZ5RA07RA3000, RHD4PRSHLSTAGST1004 | 100% |  |
| RHD4PRSHLDOSST1706 |  | Delivery for Metal Works (Stairs - Manhole Covers) Zone 7 - SHL-DOS | 6d | 2026-09-22 A | 2026-09-27 A | RHD4PRSHLPOST1700, RHD4PRSHLDOSST1705 | 100% |  |
|  | 7 | **RHD4-02-002-SHL-Material Delivery on Site - DOS -Storm Network - ST - Zone 8** |  | 2026-06-26 | 2026-11-15 |  |  |  |
| RHD4PRSHLDOSST1007 |  | Delivery for GRP pipes Zone 8 - SHL-DOS(Completed) | 30d | 2026-06-26 A | 2026-08-03 A | RHD4PRSHLPOST1000, RHD4PRSHLDOSST1006 | 100% |  |
| RHD4PRSHLDOSST1107 |  | Delivery for UPVC pipes Zone 8 - SHL-DOS | 6d | 2026-08-19 A | 2026-08-24 A | RHD4PRSHLPOST1100, RHD4PRSHLDOSST1607 | 100% |  |
| RHD4PRSHLDOSST1307 |  | Delivery for Catch basin Zone 8 - SHL-DOS | 6d | 2026-08-19 A | 2026-08-24 A | RHD4PRSHLPOST1300, RHD4PRSHLDOSST1107, RHD4PRSHLDOSST1607, RHD4PRSHLPOST1000, RHD4PRSHLDOSST1007 | 100% |  |
| RHD4PRSHLDOSST1607 |  | Delivery for Precast Concrete Zone 8 - SHL-DOS | 6d | 2026-08-19 A | 2026-08-24 A | RHD4PRSHLPOST1600 | 100% |  |
| RHD4PRSHLDOSST1707 |  | Delivery for Metal Works (Stairs - Manhole Covers) Zone 8 - SHL-DOS | 6d | 2026-11-10 | 2026-11-15 | RHD4PRSHLPOST1700, RHD4PRSHLDOSST1704 |  | -196.02d |
|  | 9 | **RHD4-02-002-SHL-Material Delivery on Site - DOS -Storm Network - ST - Zone 9** |  | 2026-02-16 | 2026-11-15 |  |  |  |
| RHD4PRSHLDOSST1008 |  | Delivery for GRP pipes Zone 9 - SHL-DOS(Completed) | 30d | 2026-02-16 A | 2026-08-03 A | RHD4PRSHLPOST1000, RHD4PRSHLDOSST1004 SS, RHD4PRSHLDOSST1007, RHD4CZ3C011RW2000, RHD4PRSHLSTAGSW1304, RHD4CZ1C081RW2000, RHD4CZ7C02ST4600 | 100% |  |
| RHD4PRSHLDOSST1108 |  | Delivery for UPVC pipes Zone 9 - SHL-DOS | 6d | 2026-08-18 A | 2026-08-23 A | RHD4PRSHLPOST1100, RHD4PRSHLDOSST1608, RHD4PRSHLDOSST1104 | 100% |  |
| RHD4PRSHLDOSST1308 |  | Delivery for Catch basin Zone 9 - SHL-DOS | 6d | 2026-08-18 A | 2026-08-23 A | RHD4PRSHLPOST1300, RHD4PRSHLDOSST1300 | 100% |  |
| RHD4PRSHLDOSST1608 |  | Delivery for Precast Concrete Zone 9 - SHL-DOS | 6d | 2026-08-18 A | 2026-08-23 A | RHD4PRSHLPOST1600, RHD4PRSHLDOSST1604 | 100% |  |
| RHD4PRSHLDOSST1708 |  | Delivery for Metal Works (Stairs - Manhole Covers) Zone 9 - SHL-DOS | 6d | 2026-11-10 | 2026-11-15 | RHD4PRSHLPOST1700 |  | -196.02d |
|  | 115 | **RHD4-02-002-SHL-Material Delivery on Site - DOS -Sewage Network - SW** |  | 2026-01-14 | 2026-11-21 |  |  |  |
|  | 1 | **RHD4-02-002-SHL-Material Delivery on Site - DOS -Sewage Network - SW - Zone 1** |  | 2026-08-04 | 2026-11-20 |  |  |  |
| RHD4PRSHLDOSSW1000 |  | Delivery for UPVC pipes Zone 1 - SHL-DOS | 6d | 2026-08-04 A | 2026-08-09 A | RHD4PRSHLDOSSW1103, RHD4PRSHLPOSW1000 | 100% |  |
| RHD4PRSHLDOSSW1300 |  | Delivery for Precast Concrete Zone 1 - SHL-DOS | 6d | 2026-08-08 A | 2026-08-13 A | RHD4PRSHLPOSW1300 | 100% |  |
| RHD4PRSHLDOSSW1400 |  | Delivery for Metal Works (Stairs - Manhole Covers) Zone 1 - SHL-DOS | 6d | 2026-11-15 | 2026-11-20 | RHD4PRSHLDOSSW1000, RHD4PRSHLPOSW1400 |  | -201.02d |
|  | 2 | **RHD4-02-002-SHL-Material Delivery on Site - DOS -Sewage Network - SW - Zone 2** |  | 2026-08-08 | 2026-11-15 |  |  |  |
| RHD4PRSHLDOSSW1301 |  | Delivery for Precast Concrete Zone 2 - SHL-DOS | 6d | 2026-08-08 A | 2026-08-13 A | RHD4PRSHLPOSW1300 | 100% |  |
| RHD4PRSHLDOSSW1101 |  | Delivery for GRP pipes Zone 2 - SHL-DOS | 6d | 2026-08-15 A | 2026-08-20 A | RHD4PRSHLPOSW1100, RHD4PRSHLDOSSW1301 | 100% |  |
| RHD4PRSHLDOSSW1001 |  | Delivery for UPVC pipes Zone 2 - SHL-DOS | 6d | 2026-08-22 A | 2026-08-27 A | RHD4PRSHLPOSW1000, RHD4PRSHLDOSSW1101 | 100% |  |
| RHD4PRSHLDOSSW1401 |  | Delivery for Metal Works (Stairs - Manhole Covers) Zone 2 - SHL-DOS | 6d | 2026-11-10 | 2026-11-15 | RHD4PRSHLPOSW1400 |  | -201d |
|  | 3 | **RHD4-02-002-SHL-Material Delivery on Site - DOS -Sewage Network - SW - Zone 3** |  | 2026-08-08 | 2026-11-15 |  |  |  |
| RHD4PRSHLDOSSW1302 |  | Delivery for Precast Concrete Zone 3 - SHL-DOS | 6d | 2026-08-08 A | 2026-08-13 A | RHD4PRSHLPOSW1300 | 100% |  |
| RHD4PRSHLDOSSW1502 |  | Delivery for HDPE pipes Zone 3 - SHL-DOS | 6d | 2026-08-10 A | 2026-08-15 A | RHD4PRSHLPOSW1500 | 100% |  |
| RHD4PRSHLDOSSW1102 |  | Delivery for GRP pipes Zone 3 - SHL-DOS | 6d | 2026-08-31 A | 2026-09-05 A | RHD4PRSHLPOSW1100 | 100% |  |
| RHD4PRSHLDOSSW1202 |  | Delivery for Valves Zone 3 - SHL-DOS | 6d | 2026-11-10 | 2026-11-15 | RHD4PRSHLPOSW1200, RHD4PRSHLDOSSW1102 |  | -202.02d |

| ID | WBS | Task | Duration | Start | Finish | Predecessors | Complete | Total float |
| --- | --- | --- | --- | --- | --- | --- | --- | --- |
| RHD4PRSHLDOSSW1402 |  | Delivery for Metal Works (Stairs - Manhole Covers) Zone 3 - SHL-DOS | 6d | 2026-11-10 | 2026-11-15 | RHD4PRSHLPOSW1400 |  | -196.02d |
|  | 4 | **RHD4-02-002-SHL-Material Delivery on Site - DOS -Sewage Network - SW - Zone 4** |  | 2026-01-14 | 2026-11-20 |  |  |  |
| RHD4PRSHLDOSSW1103 |  | Delivery for GRP pipes Zone 4 - SHL-DOS(Completed) | 30d | 2026-01-14 A | 2026-08-03 A | RHD4PRSHLPOSW1100 | 100% |  |
| RHD4PRSHLDOSSW1003 |  | Delivery for UPVC pipes Zone 4 - SHL-DOS | 6d | 2026-08-15 A | 2026-08-20 A | RHD4PRSHLPOSW1000 | 100% |  |
| RHD4PRSHLDOSSW1303 |  | Delivery for Precast Concrete Zone 4 - SHL-DOS | 6d | 2026-08-15 A | 2026-08-20 A | RHD4PRSHLPOSW1300, RHD4PRSHLDOSSW1304 | 100% |  |
| RHD4PRSHLDOSSW1203 |  | Delivery for Valves Zone 4 - SHL-DOS | 6d | 2026-11-10 | 2026-11-15 | RHD4PRSHLPOSW1200 |  | -202.02d |
| RHD4PRSHLDOSSW1403 |  | Delivery for Metal Works (Stairs - Manhole Covers) Zone 4 - SHL-DOS | 6d | 2026-11-15 | 2026-11-20 | RHD4PRSHLPOSW1400, RHD4PRSHLDOSSW1003 |  | -201.02d |
|  | 7 | **RHD4-02-002-SHL-Material Delivery on Site - DOS -Sewage Network - SW - Zone 5** |  | 2026-01-14 | 2026-10-08 |  |  |  |
| RHD4PRSHLDOSSW1104 |  | Delivery for GRP pipes Zone 5 - SHL-DOS(Completed) | 25d | 2026-01-14 A | 2026-08-03 A | RHD4PRSHLPOSW1100 | 100% |  |
| RHD4PRSHLDOSSW1004 |  | Delivery for UPVC pipes Zone 5 - SHL-DOS(Completed) | 30d | 2026-01-22 A | 2026-08-03 A | RHD4PRSHLPOSW1000, RHD4PRSHLDOSSW1104 SS | 100% |  |
| RHD4PRSHLDOSSW1504 |  | Delivery for HDPE pipes Zone 5 - SHL-DOS | 6d | 2026-07-11 A | 2026-07-16 A | RHD4PRSHLPOSW1500 | 100% |  |
| RHD4PRSHLDOSSW1304 |  | Delivery for Precast Concrete Zone 5 - SHL-DOS | 6d | 2026-08-08 A | 2026-08-13 A | RHD4PRSHLPOSW1300 | 100% |  |
| RHD4PRSHLDOSSW1204 |  | Delivery for Valves Zone 5 - SHL-DOS | 6d | 2026-08-23 A | 2026-08-28 A | RHD4PRSHLPOSW1200, RHD4PRSHLPOSW1000, RHD4PRSHLDOSSW1004, RHD4PRSHLDOSSW1304, RHD4PRSHLPOSW1100, RHD4PRSHLDOSSW1104 | 100% |  |
| RHD4PRSHLDOSSW1404 |  | Delivery for Metal Works (Stairs - Manhole Covers) Zone 5 - SHL-DOS | 6d | 2026-10-03 A | 2026-10-08 A | RHD4PRSHLPOSW1400 | 100% |  |
|  | 5 | **RHD4-02-002-SHL-Material Delivery on Site - DOS -Sewage Network - SW - Zone 6** |  | 2026-01-22 | 2026-11-21 |  |  |  |
| RHD4PRSHLDOSSW1005 |  | Delivery for UPVC pipes Zone 6 - SHL-DOS(Completed) | 30d | 2026-01-22 A | 2026-08-03 A | RHD4PRSHLPOSW1000, RHD4PRSHLDOSSW1004 SS | 100% |  |
| RHD4PRSHLDOSSW1305 |  | Delivery for Precast Concrete Zone 6 - SHL-DOS | 6d | 2026-11-10 | 2026-11-15 | RHD4PRSHLPOSW1300 |  | -202.02d |
| RHD4PRSHLDOSSW1405 |  | Delivery for Metal Works (Stairs - Manhole Covers) Zone 6 - SHL-DOS | 6d | 2026-11-16 | 2026-11-21 | RHD4PRSHLPOSW1400, RHD4PRSHLDOSSW1305, RHD4PRSHLPOSW1000, RHD4PRSHLDOSSW1005, RHD4PRSHLDOSSW1004, RHD4PRSHLDOSSW1304, RHD4PRSHLPOSW1100, RHD4PRSHLDOSSW1104 |  | -202.02d |
|  | 8 | **RHD4-02-002-SHL-Material Delivery on Site - DOS -Sewage Network - SW - Zone 7** |  | 2026-02-16 | 2026-11-21 |  |  |  |
| RHD4PRSHLDOSSW1106 |  | Delivery for GRP pipes Zone 7 - SHL-DOS(Completed) | 30d | 2026-02-16 A | 2026-08-03 A | RHD4PRSHLPOSW1100, RHD4PRSHLDOSST1306 | 100% |  |
| RHD4PRSHLDOSSW1006 |  | Delivery for UPVC pipes Zone 7 - SHL-DOS(Completed) | 30d | 2026-04-19 A | 2026-08-03 A | RHD4PRSHLPOSW1000, RHD4PRSHLDOSSW1106 SS, RHD4PRSHLDOSSW1004 SS | 100% |  |
| RHD4PRSHLDOSSW1206 |  | Delivery for Valves Zone 7 - SHL-DOS | 6d | 2026-11-10 | 2026-11-15 | RHD4PRSHLPOSW1200 |  | -208.02d |
| RHD4PRSHLDOSSW1306 |  | Delivery for Precast Concrete Zone 7 - SHL-DOS | 6d | 2026-11-10 | 2026-11-15 | RHD4PRSHLPOSW1300, RHD4PRSHLDOSSW1304 |  | -196.02d |
| RHD4PRSHLDOSSW1506 |  | Delivery for HDPE pipes Zone 7 - SHL-DOS | 6d | 2026-11-10 | 2026-11-15 | RHD4PRSHLPOSW1500 |  | -202.02d |
| RHD4PRSHLDOSSW1406 |  | Delivery for Metal Works (Stairs - Manhole Covers) Zone 7 - SHL-DOS | 6d | 2026-11-16 | 2026-11-21 | RHD4PRSHLPOSW1400, RHD4PRSHLDOSSW1206, RHD4PRSHLDOSSW1404 |  | -202.02d |
|  | 6 | **RHD4-02-002-SHL-Material Delivery on Site - DOS -Sewage Network - SW - Zone 8** |  | 2026-01-14 | 2026-11-21 |  |  |  |
| RHD4PRSHLDOSSW1107 |  | Delivery for GRP pipes Zone 8 - SHL-DOS | 15d | 2026-01-14 A | 2026-03-02 A | RHD4PRSHLPOSW1100 | 100% |  |
| RHD4PRSHLDOSSW1307 |  | Delivery for Precast Concrete Zone 8 - SHL-DOS | 6d | 2026-11-10 | 2026-11-15 | RHD4PRSHLPOSW1300 |  | -202.02d |
| RHD4PRSHLDOSSW1407 |  | Delivery for Metal Works (Stairs - Manhole Covers) Zone 8 - SHL-DOS | 6d | 2026-11-10 | 2026-11-15 | RHD4PRSHLPOSW1400 |  | -201d |
| RHD4PRSHLDOSSW1007 |  | Delivery for UPVC pipes Zone 8 - SHL-DOS | 6d | 2026-11-16 | 2026-11-21 | RHD4PRSHLPOSW1000, RHD4PRSHLDOSSW1107, RHD4PRSHLDOSSW1305, RHD4PRSHLDOSSW1005, RHD4PRSHLDOSSW1004, RHD4PRSHLDOSSW1304, RHD4PRSHLPOSW1100, RHD4PRSHLDOSSW1104 |  | -202.02d |
|  | 9 | **RHD4-02-002-SHL-Material Delivery on Site - DOS -Sewage Network - SW - Zone 9** |  | 2026-02-16 | 2026-11-21 |  |  |  |
| RHD4PRSHLDOSSW1108 |  | Delivery for GRP pipes Zone 9 - SHL-DOS(Completed) | 40d | 2026-02-16 A | 2026-08-03 A | RHD4PRSHLPOSW1100 | 100% |  |
| RHD4PRSHLDOSSW1308 |  | Delivery for Precast Concrete Zone 9 - SHL-DOS | 6d | 2026-11-10 | 2026-11-15 | RHD4PRSHLPOSW1300 |  | -202.02d |
| RHD4PRSHLDOSSW1408 |  | Delivery for Metal Works (Stairs - Manhole Covers) Zone 9 - SHL-DOS | 6d | 2026-11-10 | 2026-11-15 | RHD4PRSHLPOSW1400 |  | -201d |
| RHD4PRSHLDOSSW1008 |  | Delivery for UPVC pipes Zone 9 - SHL-DOS | 6d | 2026-11-16 | 2026-11-21 | RHD4PRSHLPOSW1000, RHD4PRSHLDOSSW1308, RHD4PRSHLPOSW1100, RHD4PRSHLDOSSW1108 |  | -202.02d |
|  | 116 | **RHD4-02-002-SHL-Material Delivery on Site - DOS -Potable Water Network - PT** |  | 2026-09-01 | 2026-11-29 |  |  |  |
|  | 1 | **RHD4-02-002-SHL-Material Delivery on Site - DOS -Potable Water Network - PT - Crossings** |  | 2026-11-10 | 2026-11-22 |  |  |  |
| RHD4PRSHLDOSPTCr1000 |  | Delivery for HDPE pipes - PTCr - SHL-DOS | 6d | 2026-11-10 | 2026-11-15 | RHD4PRSHLPOPT1000 |  | -201d |
| RHD4PRSHLDOSPTCr1100 |  | Delivery for Precast Concrete - PTCr - SHL-DOS | 6d | 2026-11-10 | 2026-11-15 | RHD4PRSHLPOPT1300 |  | -208.02d |
| RHD4PRSHLDOSPTCr1200 |  | Delivery for Valves - PTCr - SHL-DOS | 6d | 2026-11-10 | 2026-11-15 | RHD4PRSHLPOPT1100 |  | -214.02d |
| RHD4PRSHLDOSPTCr1300 |  | Delivery for Stem and Surface box - PTCr - SHL-DOS | 6d | 2026-11-10 | 2026-11-15 | RHD4PRSHLPOPT1400 |  | -196.02d |
| RHD4PRSHLDOSPTCr1500 |  | Delivery for Fire Hydrants - PTCr - SHL-DOS | 6d | 2026-11-16 | 2026-11-21 | RHD4PRSHLDOSPTCr1200, RHD4PRSHLPOPT1200 |  | -208.02d |
| RHD4PRSHLDOSPTCr1400 |  | Delivery for Metal Works (Chamber's Covers) - PTCr - SHL-DOS | 6d | 2026-11-17 | 2026-11-22 | RHD4PRSHLPOPT1500 |  | -209.02d |
|  | 2 | **RHD4-02-002-SHL-Material Delivery on Site - DOS -Potable Water Network - PT - Network** |  | 2026-09-01 | 2026-11-29 |  |  |  |
| RHD4PRSHLDOSPT1000 |  | Delivery for HDPE pipes - PT - SHL-DOS | 6d | 2026-09-01 A | 2026-09-06 A | RHD4PRSHLSTAGST1007, RHD4PRSHLPOPT1000, RHD4PRSHLDOSSW1106, RHD4CZ6C062ST4700 | 100% |  |
| RHD4PRSHLDOSPT1100 |  | Delivery for Precast Concrete - PT - SHL-DOS | 6d | 2026-09-08 A | 2026-09-13 A | RHD4PRSHLDOSPT1000, RHD4CZ5L08RW2000 | 100% |  |
| RHD4PRSHLDOSPT1300 |  | Delivery for Stem and Surface box - PT - SHL-DOS | 6d | 2026-10-22 A | 2026-10-27 A | RHD4PRSHLDOSPT1100, RHD4PRSHLPOPT1400, RHD4PRSHLSTAGSW1006, RHD4PRSHLSTAGSW1106, RHD4PRSHLSTAGST1307 | 100% |  |
| RHD4PRSHLDOSPT1200 |  | Delivery for Valves - PT - SHL-DOS | 6d | 2026-11-10 | 2026-11-15 | RHD4PRSHLPOPT1100 |  | -202.02d |
| RHD4PRSHLDOSPT1400 |  | Delivery for Metal Works (Chamber's Covers) - PT - SHL-DOS | 6d | 2026-11-17 | 2026-11-22 | RHD4PRSHLPOPT1500, RHD4PRSHLDOSPT1200 |  | -203.02d |
| RHD4PRSHLDOSPT1500 |  | Delivery for Fire Hydrants - PT - SHL-DOS | 6d | 2026-11-24 | 2026-11-29 | RHD4PRSHLDOSPT1200, RHD4PRSHLPOPT1200, RHD4ENMARAPPEW100 |  | -210.02d |
|  | 117 | **RHD4-02-002-SHL-Material Delivery on Site - DOS -Irrigation Network - IRR** |  | 2026-08-17 | 2027-01-06 |  |  |  |
|  | 1 | **RHD4-02-002-SHL-Material Delivery on Site - DOS -Irrigation Network - IRR - Crossings** |  | 2026-11-10 | 2026-11-27 |  |  |  |
| RHD4PRSHLDOSIRRC1000 |  | Delivery for HDPE pipes - IRRC - SHL-DOS | 6d | 2026-11-10 | 2026-11-15 | RHD4PRSHLPOIRR1000 |  | -220.02d |
| RHD4PRSHLDOSIRRC1100 |  | Delivery for Valves - IRRC - SHL-DOS | 6d | 2026-11-10 | 2026-11-15 | RHD4PRSHLPOIRR1100 |  | -220.02d |
| RHD4PRSHLDOSIRRC1200 |  | Delivery for Precast Concrete - IRRC - SHL-DOS | 6d | 2026-11-16 | 2026-11-21 | RHD4PRSHLDOSIRRC1000, RHD4PRSHLPOIRR1200 |  | -220.02d |
| RHD4PRSHLDOSIRRC1300 |  | Delivery for Stem and Surface box - IRRC - SHL-DOS | 6d | 2026-11-16 | 2026-11-21 | RHD4PRSHLDOSIRRC1100, RHD4PRSHLPOIRR1300 |  | -214.02d |
| RHD4PRSHLDOSIRRC1400 |  | Delivery for Metal Works (Chamber's Covers) - IRRC - SHL-DOS | 6d | 2026-11-22 | 2026-11-27 | RHD4PRSHLDOSIRRC1300, RHD4PRSHLPOIRR1400 |  | -214.02d |
|  | 2 | **RHD4-02-002-SHL-Material Delivery on Site - DOS -Irrigation Network - IRR - Network** |  | 2026-08-17 | 2027-01-06 |  |  |  |
| RHD4PRSHLDOSIRR1300 |  | Delivery for Stem and Surface box - IRR - SHL-DOS | 6d | 2026-08-17 A | 2026-08-22 A | RHD4PRSHLPOIRR1300, RHD4PRSHLDOSIRR1100, RHD4PRSHLDOSPT1300, RHD4CZ6A015ICT3100, RHD4PRSHLSTAGPT1000 | 100% |  |
| RHD4PRSHLDOSIRR1000 |  | Delivery for HDPE pipes - IRR - SHL-DOS | 6d | 2026-11-10 | 2026-11-15 | RHD4PRSHLPOIRR1000 |  | -202.02d |
| RHD4PRSHLDOSIRR1100 |  | Delivery for Valves - IRR - SHL-DOS | 6d | 2026-11-10 | 2026-11-15 | RHD4PRSHLPOIRR1100 |  | -196.02d |
| RHD4PRSHLDOSIRR1200 |  | Delivery for Precast Concrete - IRR - SHL-DOS | 6d | 2026-11-16 | 2026-11-21 | RHD4PRSHLPOIRR1200, RHD4PRSHLDOSIRR1000 |  | -202.02d |
| RHD4PRSHLDOSIRR1400 |  | Delivery for Metal Works (Chamber's Covers) - IRR - SHL-DOS | 6d | 2027-01-01 | 2027-01-06 | RHD4PRSHLPOIRR1400, RHD4PRSHLDOSPT1300 |  | -233d |
|  | 118 | **RHD4-02-002-SHL-Material Delivery on Site - DOS -Medium Voltage - MV** |  | 2026-11-10 | 2026-12-13 |  |  |  |
| RHD4PRSHLDOSMV1000 |  | Delivery for UPVC Pipes for Duct Banks - SHL-DOS | 6d | 2026-11-10 | 2026-11-15 | RHD4PRSHLPOMV1000 |  | -201d |
| RHD4PRSHLDOSMV1100 |  | Delivery for Medium Voltage Cable 3Cx500 mm2 - SHL-DOS | 6d | 2026-12-08 | 2026-12-13 | RHD4PRSHLPOMV1100 |  | -229d |
| RHD4PRSHLDOSMV1200 |  | Delivery for Medium Voltage Cable 3Cx50 mm2 - SHL-DOS | 6d | 2026-12-08 | 2026-12-13 | RHD4PRSHLPOMV1200 |  | -229d |
| RHD4PRSHLDOSMV1300 |  | Delivery for Straight Joints 3Cx50 mm2 - SHL-DOS | 6d | 2026-12-08 | 2026-12-13 | RHD4PRSHLPOMV1300 |  | -229d |
| RHD4PRSHLDOSMV1400 |  | Delivery for Normally Open Points (Outdoor type) - SHL-DOS | 6d | 2026-12-08 | 2026-12-13 | RHD4PRSHLPOMV1400 |  | -229d |
|  | 119 | **RHD4-02-002-SHL-Material Delivery on Site - DOS -Low Voltage - LV** |  | 2026-11-10 | 2027-01-11 |  |  |  |

| ID | WBS | Task | Duration | Start | Finish | Predecessors | Complete | Total float |
| --- | --- | --- | --- | --- | --- | --- | --- | --- |
| RHD4PRSHLDOSLV1000 |  | Delivery for UPVC Pipes for Duct Banks - SHL-DOS | 6d | 2026-11-10 | 2026-11-15 | RHD4PRSHLPOLV1000 |  | -201d |
| RHD4PRSHLDOSLV1100 |  | Delivery for Low voltage Cables - SHL-DOS | 6d | 2026-11-10 | 2026-11-15 | RHD4PRSHLPOLV1100 |  | -201d |
| RHD4PRSHLDOSLV1200 |  | Delivery for Distribution Pillars - SHL-DOS | 6d | 2026-12-01 | 2026-12-06 | RHD4PRSHLPOLV1200 |  | -222d |
| RHD4PRSHLDOSLV1300 |  | Delivery for KWH Meter mounting Frame - SHL-DOS | 6d | 2026-12-01 | 2026-12-06 | RHD4PRSHLPOLV1300 |  | -222d |
| RHD4PRSHLDOSLV1500 |  | Delivery for Earthing for Pillars and Panels - SHL-DOS | 6d | 2026-12-01 | 2026-12-06 | RHD4PRSHLPOLV1500 |  | -217.02d |
| RHD4PRSHLDOSLV1400 |  | Delivery for Low Voltage Drawpit - SHL-DOS | 6d | 2027-01-05 | 2027-01-11 | RHD4PRSHLDOSLV1000, RHD4PRSHLDOSIRR1300, RHD4CZ6A015TC3400, RHD4PRSHLSTAGPT1100, RHD4PRSHLPOLV1400 |  | -231.02d |
|  | 120 | **RHD4-02-002-SHL-Material Delivery on Site - DOS -Street Lighting Network -SL** |  | 2026-09-08 | 2027-01-17 |  |  |  |
| RHD4PRSHLDOSSL1000 |  | Delivery for UPVC Pipes for Duct Banks - SHL-DOS | 6d | 2026-09-08 A | 2026-09-13 A | RHD4PRSHLDOSLV1000, RHD4PRSHLDOSSL1300, RHD4PRSHLPOSL1000 | 100% |  |
| RHD4PRSHLDOSSL1400 |  | Delivery for Street Lighting Drawpit - SHL-DOS | 6d | 2026-10-01 A | 2026-10-06 A | RHD4ENMSSL2000, RHD4PRSHLDOSLV1400, RHD4PRSHLDOSLV1400 FF, RHD4PRSHLPOSL1400 | 100% |  |
| RHD4PRSHLDOSSL1200 |  | Delivery for Lighting Poles - SHL-DOS | 6d | 2026-10-13 A | 2026-10-18 A | RHD4PRSHLDOSLV1100 SS, RHD4PRSHLDOSSL1400, RHD4CZ6A015ST7300, RHD4CZ4C012RW2000, RHD4PRSHLPOSL1200 | 100% |  |
| RHD4PRSHLDOSSL1300 |  | Delivery for Street Lighting Luminaire - SHL-DOS | 6d | 2026-10-21 A | 2026-10-26 A | RHD4PRSHLDOSSL1100, RHD4PRSHLPOSL1300 | 100% |  |
| RHD4PRSHLDOSSL1100 |  | Delivery for Street Lighting Cables - SHL-DOS | 6d | 2027-01-11 | 2027-01-17 | RHD4PRSHLDOSSL1200, RHD4PRSHLDOSSL1200 FF, RHD4PRSHLPOSL1100 |  | -229.02d |
|  | 121 | **RHD4-02-002-SHL-Material Delivery on Site - DOS -Landscape Network - LS** |  |  |  |  |  |  |
|  | 122 | **RHD4-02-002-SHL-Material Delivery on Site - DOS -Telecommunications Network - TC** |  | 2026-09-01 | 2026-09-06 |  |  |  |
| RHD4PRSHLDOSTC1000 |  | Delivery for HDPE Ducts - SHL-DOS | 6d | 2026-09-01 A | 2026-09-06 A | RHD4CTUN1Z5STG21170, RHD4PRSHLDOSTC1100, RHD4PRSHLPOTC1000 | 100% |  |
| RHD4PRSHLDOSTC1100 |  | Delivery for HDPE Road Crossings Ducts - SHL-DOS | 6d | 2026-09-01 A | 2026-09-06 A | RHD4PRSHLSTAGSL1300, RHD4PRSHLDOSSL1000, RHD4PRSHLPOTC1100 | 100% |  |
| RHD4PRSHLDOSTC1200 |  | Delivery for Telecommunications Manhole - SHL-DOS | 6d | 2026-09-01 A | 2026-09-06 A | RHD4PRSHLDOSTC1000, RHD4CZ6C062ST3502, RHD4PRSHLPOTC1200 | 100% |  |
|  | 123 | **RHD4-02-002-SHL-Material Delivery on Site - DOS -Information and Communication Technologies - ICT** |  | 2026-11-10 | 2027-02-13 |  |  |  |
| RHD4PRSHLDOSICT1200 |  | Delivery for Telecommunications Manhole - SHL-DOS | 6d | 2026-11-10 | 2026-11-15 | RHD4PRSHLPOICT1200 |  | -196.02d |
| RHD4PRSHLDOSICT1100 |  | Delivery for HDPE Road Crossings Ducts - SHL-DOS | 6d | 2027-02-02 | 2027-02-07 | RHD4PRSHLDOSTC1200, RHD4PRSHLPOICT1100 |  | -232d |
| RHD4PRSHLDOSICT1000 |  | Delivery for HDPE Ducts - SHL-DOS | 6d | 2027-02-08 | 2027-02-13 | RHD4PRSHLDOSICT1100, RHD4CZ6A02SW3500, RHD4CZ5L016ST1503, RHD4PRSHLPOICT1000 |  | -230d |
|  | 124 | **RHD4-02-002-SHL-Material Delivery on Site - DOS -Security Network - CCTV** |  | 2026-11-24 | 2026-12-20 |  |  |  |
| RHD4PRSHLDOSCCTV1000 |  | Delivery for CCTV Network Poles - SHL-DOS | 6d | 2026-11-24 | 2026-11-29 | RHD4PRSHLPOCCTV1000 |  | -210.02d |
| RHD4PRSHLDOSCCTV1200 |  | Delivery for CCTV Panels and Panel's Components - SHL-DOS | 6d | 2026-12-01 | 2026-12-06 | RHD4PRSHLPOCCTV1200 |  | -217.02d |
| RHD4PRSHLDOSCCTV1300 |  | Delivery for CCTV Fiber Optic Cables - SHL-DOS | 6d | 2026-12-08 | 2026-12-13 | RHD4PRSHLPOCCTV1300 |  | -224.02d |
| RHD4PRSHLDOSCCTV1100 |  | Delivery for CCTV Network Cameras - SHL-DOS | 6d | 2026-12-15 | 2026-12-20 | RHD4PRSHLPOTC1200, RHD4PRSHLPOCCTV1100 |  | -231.02d |
|  | 125 | **RHD4-02-002-SHL-Material Delivery on Site - DOS -Road Works - RD** |  | 2026-11-10 | 2026-12-13 |  |  |  |
| RHD4PRSHLDOSRD1000 |  | Delivery for Aggregate Base Courses - SHL-DOS | 6d | 2026-11-10 | 2026-11-15 | RHD4PRSHLPORD1000 |  | -201d |
| RHD4PRSHLDOSRD1100 |  | Delivery for Bituminous Asphalt Layers - SHL-DOS | 6d | 2026-11-10 | 2026-11-15 | RHD4PRSHLPORD1100 |  | -201d |
| RHD4PRSHLDOSRD1200 |  | Delivery for Precast Concrete Curbstone - SHL-DOS | 6d | 2026-11-10 | 2026-11-15 | RHD4PRSHLPORD1200 |  | -201d |
| RHD4PRSHLDOSRD1600 |  | Delivery for Traffic Signage - SHL-DOS | 6d | 2026-11-17 | 2026-11-22 | RHD4PRSHLPORD1600 |  | -208d |
| RHD4PRSHLDOSRD1300 |  | Delivery for Interlock Precast Concrete Unit Paving - SHL-DOS | 6d | 2026-11-24 | 2026-11-29 | RHD4PRSHLPORD1300 |  | -210.02d |
| RHD4PRSHLDOSRD1400 |  | Delivery for Wheel Stopper - SHL-DOS | 6d | 2026-12-01 | 2026-12-06 | RHD4PRSHLPORD1400 |  | -217.02d |
| RHD4PRSHLDOSRD1500 |  | Delivery for Pavement Marking - SHL-DOS | 6d | 2026-12-08 | 2026-12-13 | RHD4PRSHLPORD1500 |  | -224.02d |
|  | 126 | **RHD4-02-002-SHL-Material Delivery on Site - DOS -Lift Stations - LFS** |  | 2026-11-10 | 2026-12-13 |  |  |  |
| RHD4PRSHLDOSLFS1700 |  | Delivery for Ductile Iron Pipes & Fittings - SHL-DOS | 6d | 2026-11-10 | 2026-11-15 | RHD4PRSHLPOLFS1700 |  | -201d |
| RHD4PRSHLDOSLFS1800 |  | Delivery for Sewage Lift Station Valves - SHL-DOS | 6d | 2026-11-10 | 2026-11-15 | RHD4PRSHLPOLFS1800 |  | -201d |
| RHD4PRSHLDOSLFS1900 |  | Delivery for Basket screen - SHL-DOS | 6d | 2026-11-10 | 2026-11-15 | RHD4PRSHLPOLFS1900 |  | -201d |
| RHD4PRSHLDOSLFS2600 |  | Delivery for Low Voltage Cables - SHL-DOS | 6d | 2026-11-10 | 2026-11-15 | RHD4PRSHLPOLFS2600 |  | -201d |
| RHD4PRSHLDOSLFS2700 |  | Delivery for Lighting Fixtures - SHL-DOS | 6d | 2026-11-10 | 2026-11-15 | RHD4PRSHLPOLFS2700 |  | -196.02d |
| RHD4PRSHLDOSLFS1100 |  | Delivery for Roof Waterproofing System - SHL-DOS | 6d | 2026-11-17 | 2026-11-22 | RHD4PRSHLPOLFS1100 |  | -208d |
| RHD4PRSHLDOSLFS1200 |  | Delivery for Bituminous Sheet Waterproofing - SHL-DOS | 6d | 2026-11-17 | 2026-11-22 | RHD4PRSHLPOLFS1200 |  | -208d |
| RHD4PRSHLDOSLFS1600 |  | Delivery for Epoxy Coating - SHL-DOS | 6d | 2026-11-17 | 2026-11-22 | RHD4PRSHLPOLFS1600 |  | -208d |
| RHD4PRSHLDOSLFS2100 |  | Delivery for UPVC Pipes for Sanitary Drain - SHL-DOS | 6d | 2026-11-17 | 2026-11-22 | RHD4PRSHLPOLFS2100 |  | -208d |
| RHD4PRSHLDOSLFS2400 |  | Delivery for lighting and power panel boards - SHL-DOS | 6d | 2026-11-17 | 2026-11-22 | RHD4PRSHLPOLFS2400 |  | -208d |
| RHD4PRSHLDOSLFS3000 |  | Delivery for Fire Alarm System - SHL-DOS | 6d | 2026-11-17 | 2026-11-22 | RHD4PRSHLPOLFS3000 |  | -208d |
| RHD4PRSHLDOSLFS1300 |  | Delivery for Fluid-Applied Waterproofing - SHL-DOS | 6d | 2026-11-24 | 2026-11-29 | RHD4PRSHLPOLFS1300 |  | -215d |
| RHD4PRSHLDOSLFS2300 |  | Delivery for Motor Control Center (MCC) - SHL-DOS | 6d | 2026-11-24 | 2026-11-29 | RHD4PRSHLPOLFS2300 |  | -215d |
| RHD4PRSHLDOSLFS2800 |  | Delivery for Wiring Devices - SHL-DOS | 6d | 2026-11-24 | 2026-11-29 | RHD4PRSHLPOLFS2800 |  | -215d |
| RHD4PRSHLDOSLFS1000 |  | Delivery for Metal Ladder and checkered Plate - SHL-DOS | 6d | 2026-12-01 | 2026-12-06 | RHD4PRSHLPOLFS1000 |  | -217.02d |
| RHD4PRSHLDOSLFS1400 |  | Delivery for Metal Doors and Access Doors and Frames - SHL-DOS | 6d | 2026-12-01 | 2026-12-06 | RHD4PRSHLPOLFS1400 |  | -222d |
| RHD4PRSHLDOSLFS2200 |  | Delivery for wall mounted Split/AC - SHL-DOS | 6d | 2026-12-01 | 2026-12-06 | RHD4PRSHLPOLFS2200 |  | -222d |
| RHD4PRSHLDOSLFS2900 |  | Delivery for Enclosed Switches and Circuit Breakers - SHL-DOS | 6d | 2026-12-01 | 2026-12-06 | RHD4PRSHLPOLFS2900 |  | -222d |
| RHD4PRSHLDOSLFS1500 |  | Delivery for Painting - SHL-DOS | 6d | 2026-12-08 | 2026-12-13 | RHD4PRSHLPOLFS1500 |  | -229d |
| RHD4PRSHLDOSLFS2500 |  | Delivery for Earthing for Lift Stations - SHL-DOS | 6d | 2026-12-08 | 2026-12-13 | RHD4PRSHLPOLFS2500 |  | -229d |
| RHD4PRSHLDOSLFS3100 |  | Delivery for Fences and Gates - SHL-DOS | 6d | 2026-12-08 | 2026-12-13 | RHD4PRSHLPOLFS3100 |  | -229d |
|  | 1 | **RHD4-02-002-Short Lead Items - SHL-Staging Time - STAG** |  | 2026-06-14 | 2027-02-19 |  |  |  |
|  | 114 | **RHD4-02-002-SHL-Staging Time - STAG -Storm Network - ST** |  | 2026-06-14 | 2026-11-28 |  |  |  |
|  | 1 | **RHD4-02-002-SHL-Staging Time - STAG -Storm Network - ST - Zone 1** |  | 2026-08-05 | 2026-11-22 |  |  |  |
| RHD4PRSHLSTAGST1000 |  | Staging for GRP pipes Zone 1 - SHL-STAG | 6d | 2026-08-05 A | 2026-08-10 A | RHD4PRSHLDOSST1600, RHD4PRSHLPOST1000, RHD4PRSHLDOSST1000 | 100% |  |
| RHD4PRSHLSTAGST1100 |  | Staging for UPVC pipes Zone 1 - SHL-STAG | 6d | 2026-09-07 A | 2026-09-12 A | RHD4PRSHLDOSST1100 | 100% |  |
| RHD4PRSHLSTAGST1300 |  | Staging for Catch basin Zone 1 - SHL-STAG | 6d | 2026-09-24 A | 2026-09-29 A | RHD4PRSHLDOSST1300 | 100% |  |
| RHD4PRSHLSTAGST1600 |  | Staging for Precast Concrete Zone 1 - SHL-STAG | 6d | 2026-09-24 A | 2026-09-29 A | RHD4PRSHLDOSST1600 | 100% |  |
| RHD4PRSHLSTAGST1700 |  | Staging for Metal Works (Stairs - Manhole Covers) Zone 1 - SHL-STAG | 6d | 2026-10-11 A | 2026-10-16 A | RHD4PRSHLDOSST1700 | 100% |  |
| RHD4PRSHLSTAGST1400 |  | Staging for Grouted Riprap Zone 1 - SHL-STAG | 6d | 2026-11-17 | 2026-11-22 | RHD4PRSHLDOSST1400 |  | -197.02d |
|  | 2 | **RHD4-02-002-SHL-Staging Time - STAG -Storm Network - ST - Zone 2** |  | 2026-06-14 | 2026-11-28 |  |  |  |
| RHD4PRSHLSTAGST1501 |  | Staging for Tensile reinforcement steel Zone 2 - SHL-STAG | 6d | 2026-06-14 A | 2026-06-19 A | RHD4PRSHLDOSST1501 | 100% |  |
| RHD4PRSHLSTAGST1001 |  | Staging for GRP pipes Zone 2 - SHL-STAG | 6d | 2026-08-04 A | 2026-08-09 A | RHD4PRSHLPOST1000, RHD4PRSHLDOSST1001 | 100% |  |
| RHD4PRSHLSTAGST1101 |  | Staging for UPVC pipes Zone 2 - SHL-STAG | 6d | 2026-10-06 A | 2026-10-11 A | RHD4PRSHLDOSST1101 | 100% |  |
| RHD4PRSHLSTAGST1601 |  | Staging for Precast Concrete Zone 2 - SHL-STAG | 6d | 2026-10-07 A | 2026-10-12 A | RHD4PRSHLDOSST1601 | 100% |  |

| ID | WBS | Task | Duration | Start | Finish | Predecessors | Complete | Total float |
| --- | --- | --- | --- | --- | --- | --- | --- | --- |
| RHD4PRSHLSTAGST1301 |  | Staging for Catch basin Zone 2 - SHL-STAG | 6d | 2026-10-13 A | 2026-10-18 A | RHD4PRSHLDOSST1301 | 100% |  |
| RHD4PRSHLSTAGST1701 |  | Staging for Metal Works (Stairs - Manhole Covers) Zone 2 - SHL-STAG | 6d | 2026-11-16 | 2026-11-21 | RHD4PRSHLDOSST1701 |  | -196.02d |
| RHD4PRSHLSTAGST1401 |  | Staging for Grouted Riprap Zone 2 - SHL-STAG | 6d | 2026-11-23 | 2026-11-28 | RHD4PRSHLDOSST1401 |  | -203.02d |
|  | 3 | **RHD4-02-002-SHL-Staging Time - STAG -Storm Network - ST - Zone 3** |  | 2026-09-09 | 2026-11-21 |  |  |  |
| RHD4PRSHLSTAGST1002 |  | Staging for GRP pipes Zone 3 - SHL-STAG | 6d | 2026-09-09 A | 2026-09-14 A | RHD4PRSHLDOSST1602, RHD4PRSHLPOST1000, RHD4PRSHLDOSST1008 SS, RHD4PRSHLDOSST1608, RHD4PRSHLDOSST1008, RHD4PRSHLDOSST1604, RHD4PRSHLDOSST1004 | 100% |  |
| RHD4PRSHLSTAGST1602 |  | Staging for Precast Concrete Zone 3 - SHL-STAG | 6d | 2026-09-09 A | 2026-09-14 A | RHD4PRSHLDOSST1602 | 100% |  |
| RHD4PRSHLSTAGST1102 |  | Staging for UPVC pipes Zone 3 - SHL-STAG | 6d | 2026-09-15 A | 2026-09-20 A | RHD4PRSHLDOSST1102 | 100% |  |
| RHD4PRSHLSTAGST1302 |  | Staging for Catch basin Zone 3 - SHL-STAG | 6d | 2026-09-19 A | 2026-09-24 A | RHD4PRSHLDOSST1302 | 100% |  |
| RHD4PRSHLSTAGST1702 |  | Staging for Metal Works (Stairs - Manhole Covers) Zone 3 - SHL-STAG | 6d | 2026-11-16 | 2026-11-21 | RHD4PRSHLDOSST1702 |  | -196.02d |
|  | 4 | **RHD4-02-002-SHL-Staging Time - STAG -Storm Network - ST - Zone 4** |  | 2026-08-08 | 2026-11-21 |  |  |  |
| RHD4PRSHLSTAGST1003 |  | Staging for GRP pipes Zone 4 - SHL-STAG | 6d | 2026-08-08 A | 2026-08-26 A | RHD4PRSHLDOSST1603, RHD4PRSHLPOST1000, RHD4PRSHLDOSST1003 | 100% |  |
| RHD4PRSHLSTAGST1103 |  | Staging for UPVC pipes Zone 4 - SHL-STAG | 6d | 2026-09-09 A | 2026-09-14 A | RHD4PRSHLDOSST1103 | 100% |  |
| RHD4PRSHLSTAGST1303 |  | Staging for Catch basin Zone 4 - SHL-STAG | 6d | 2026-09-09 A | 2026-09-14 A | RHD4PRSHLDOSST1303 | 100% |  |
| RHD4PRSHLSTAGST1603 |  | Staging for Precast Concrete Zone 4 - SHL-STAG | 6d | 2026-09-09 A | 2026-09-14 A | RHD4PRSHLDOSST1603 | 100% |  |
| RHD4PRSHLSTAGST1703 |  | Staging for Metal Works (Stairs - Manhole Covers) Zone 4 - SHL-STAG | 6d | 2026-11-16 | 2026-11-21 | RHD4PRSHLDOSST1703 |  | -196.02d |
|  | 5 | **RHD4-02-002-SHL-Staging Time - STAG -Storm Network - ST - Zone 5** |  | 2026-06-17 | 2026-09-27 |  |  |  |
| RHD4PRSHLSTAGST1604 |  | Staging for Precast Concrete Zone 5 - SHL-STAG | 7d | 2026-06-17 A | 2026-06-25 A | RHD4PRSHLDOSST1604 | 100% |  |
| RHD4PRSHLSTAGST1504 |  | Staging for Tensile reinforcement steel Zone 5 - SHL-STAG | 6d | 2026-06-21 A | 2026-06-26 A | RHD4PRSHLDOSST1504 | 100% |  |
| RHD4PRSHLSTAGST1004 |  | Staging for GRP pipes Zone 5 - SHL-STAG | 6d | 2026-08-04 A | 2026-08-09 A | RHD4PRSHLDOSST1604, RHD4PRSHLPOST1000, RHD4PRSHLDOSST1004 | 100% |  |
| RHD4PRSHLSTAGST1104 |  | Staging for UPVC pipes Zone 5 - SHL-STAG | 6d | 2026-08-09 A | 2026-08-14 A | RHD4PRSHLDOSST1104 | 100% |  |
| RHD4PRSHLSTAGST1204 |  | Staging for HDPE pipes Zone 5 - SHL-STAG | 6d | 2026-08-15 A | 2026-08-20 A | RHD4PRSHLDOSST1204, RHD4PRSHLSTAGST1504 | 100% |  |
| RHD4PRSHLSTAGST1304 |  | Staging for Catch basin Zone 5 - SHL-STAG | 6d | 2026-08-19 A | 2026-08-24 A | RHD4PRSHLDOSST1304 | 100% |  |
| RHD4PRSHLSTAGST1704 |  | Staging for Metal Works (Stairs - Manhole Covers) Zone 5 - SHL-STAG | 6d | 2026-09-22 A | 2026-09-27 A | RHD4PRSHLDOSST1704 | 100% |  |
|  | 6 | **RHD4-02-002-SHL-Staging Time - STAG -Storm Network - ST - Zone 6** |  | 2026-08-08 | 2026-09-27 |  |  |  |
| RHD4PRSHLSTAGST1005 |  | Staging for GRP pipes Zone 6 - SHL-STAG | 6d | 2026-08-08 A | 2026-08-20 A | RHD4PRSHLDOSST1605, RHD4PRSHLPOST1000, RHD4PRSHLDOSST1005 | 100% |  |
| RHD4PRSHLSTAGST1105 |  | Staging for UPVC pipes Zone 6 - SHL-STAG | 6d | 2026-09-09 A | 2026-09-14 A | RHD4PRSHLDOSST1105 | 100% |  |
| RHD4PRSHLSTAGST1305 |  | Staging for Catch basin Zone 6 - SHL-STAG | 6d | 2026-09-09 A | 2026-09-14 A | RHD4PRSHLDOSST1305 | 100% |  |
| RHD4PRSHLSTAGST1605 |  | Staging for Precast Concrete Zone 6 - SHL-STAG | 6d | 2026-09-09 A | 2026-09-14 A | RHD4PRSHLDOSST1605 | 100% |  |
| RHD4PRSHLSTAGST1705 |  | Staging for Metal Works (Stairs - Manhole Covers) Zone 6 - SHL-STAG | 6d | 2026-09-22 A | 2026-09-27 A | RHD4PRSHLDOSST1705 | 100% |  |
|  | 8 | **RHD4-02-002-SHL-Staging Time - STAG -Storm Network - ST - Zone 7** |  | 2026-08-04 | 2026-10-03 |  |  |  |
| RHD4PRSHLSTAGST1006 |  | Staging for GRP pipes Zone 7 - SHL-STAG | 6d | 2026-08-04 A | 2026-08-09 A | RHD4PRSHLDOSST1606, RHD4PRSHLPOST1000, RHD4PRSHLDOSST1006, RHD4PRSHLDOSST1605, RHD4PRSHLDOSST1005 | 100% |  |
| RHD4PRSHLSTAGST1106 |  | Staging for UPVC pipes Zone 7 - SHL-STAG | 6d | 2026-09-09 A | 2026-09-14 A | RHD4PRSHLDOSST1106 | 100% |  |
| RHD4PRSHLSTAGST1306 |  | Staging for Catch basin Zone 7 - SHL-STAG | 6d | 2026-09-09 A | 2026-09-14 A | RHD4PRSHLDOSST1206 | 100% |  |
| RHD4PRSHLSTAGST1606 |  | Staging for Precast Concrete Zone 7 - SHL-STAG | 6d | 2026-09-09 A | 2026-09-14 A | RHD4PRSHLDOSST1606 | 100% |  |
| RHD4PRSHLSTAGST1206 |  | Staging for HDPE pipes Zone 7 - SHL-STAG | 6d | 2026-09-24 A | 2026-09-29 A | RHD4PRSHLDOSST1306, RHD4PRSHLSTAGST1204, RHD4PRSHLSTAPTCr1300 | 100% |  |
| RHD4PRSHLSTAGST1706 |  | Staging for Metal Works (Stairs - Manhole Covers) Zone 7 - SHL-STAG | 6d | 2026-09-28 A | 2026-10-03 A | RHD4PRSHLDOSST1706 | 100% |  |
|  | 7 | **RHD4-02-002-SHL-Staging Time - STAG -Storm Network - ST - Zone 8** |  | 2026-08-04 | 2026-11-21 |  |  |  |
| RHD4PRSHLSTAGST1007 |  | Staging for GRP pipes Zone 8 - SHL-STAG | 6d | 2026-08-04 A | 2026-08-09 A | RHD4PRSHLDOSST1607, RHD4PRSHLPOST1000, RHD4PRSHLDOSST1007, RHD4PRSHLSTAGST1006 | 100% |  |
| RHD4PRSHLSTAGST1107 |  | Staging for UPVC pipes Zone 8 - SHL-STAG | 6d | 2026-08-25 A | 2026-08-30 A | RHD4PRSHLDOSST1107 | 100% |  |
| RHD4PRSHLSTAGST1307 |  | Staging for Catch basin Zone 8 - SHL-STAG | 6d | 2026-08-25 A | 2026-08-30 A | RHD4PRSHLDOSST1307 | 100% |  |
| RHD4PRSHLSTAGST1607 |  | Staging for Precast Concrete Zone 8 - SHL-STAG | 6d | 2026-08-25 A | 2026-08-30 A | RHD4PRSHLDOSST1607 | 100% |  |
| RHD4PRSHLSTAGST1707 |  | Staging for Metal Works (Stairs - Manhole Covers) Zone 8 - SHL-STAG | 6d | 2026-11-16 | 2026-11-21 | RHD4PRSHLDOSST1707 |  | -196.02d |
|  | 9 | **RHD4-02-002-SHL-Staging Time - STAG -Storm Network - ST - Zone 9** |  | 2026-08-24 | 2026-11-21 |  |  |  |
| RHD4PRSHLSTAGST1008 |  | Staging for GRP pipes Zone 9 - SHL-STAG | 6d | 2026-08-24 A | 2026-08-29 A | RHD4PRSHLDOSST1608, RHD4PRSHLPOST1000, RHD4PRSHLDOSST1008, RHD4PRSHLDOSST1604, RHD4PRSHLDOSST1004 | 100% |  |
| RHD4PRSHLSTAGST1108 |  | Staging for UPVC pipes Zone 9 - SHL-STAG | 6d | 2026-08-24 A | 2026-08-29 A | RHD4PRSHLDOSST1108 | 100% |  |
| RHD4PRSHLSTAGST1308 |  | Staging for Catch basin Zone 9 - SHL-STAG | 6d | 2026-08-24 A | 2026-08-29 A | RHD4PRSHLDOSST1308 | 100% |  |
| RHD4PRSHLSTAGST1608 |  | Staging for Precast Concrete Zone 9 - SHL-STAG | 6d | 2026-08-24 A | 2026-08-29 A | RHD4PRSHLDOSST1608 | 100% |  |
| RHD4PRSHLSTAGST1708 |  | Staging for Metal Works (Stairs - Manhole Covers) Zone 9 - SHL-STAG | 6d | 2026-11-16 | 2026-11-21 | RHD4PRSHLDOSST1708 |  | -196.02d |
|  | 115 | **RHD4-02-002-SHL-Staging Time - STAG -Sewage Network - SW** |  | 2026-08-04 | 2026-12-03 |  |  |  |
|  | 1 | **RHD4-02-002-SHL-Staging Time - STAG -Sewage Network - SW - Zone 1** |  | 2026-08-10 | 2026-11-26 |  |  |  |
| RHD4PRSHLSTAGSW1000 |  | Staging for UPVC pipes Zone 1 - SHL-DOS | 6d | 2026-08-10 A | 2026-08-15 A | RHD4PRSHLDOSSW1000 | 100% |  |
| RHD4PRSHLSTAGSW1300 |  | Staging for Precast Concrete Zone 1 - SHL-DOS | 6d | 2026-08-15 A | 2026-08-20 A | RHD4PRSHLDOSSW1300 | 100% |  |
| RHD4PRSHLSTAGSW1400 |  | Staging for Metal Works (Stairs - Manhole Covers) Zone 1 - SHL-DOS | 6d | 2026-11-21 | 2026-11-26 | RHD4PRSHLDOSSW1400 |  | -201.02d |
|  | 2 | **RHD4-02-002-SHL-Staging Time - STAG -Sewage Network - SW - Zone 2** |  | 2026-08-15 | 2026-11-21 |  |  |  |
| RHD4PRSHLSTAGSW1301 |  | Staging for Precast Concrete Zone 2 - SHL-DOS | 6d | 2026-08-15 A | 2026-08-20 A | RHD4PRSHLDOSSW1301 | 100% |  |
| RHD4PRSHLSTAGSW1101 |  | Staging for GRP pipes Zone 2 - SHL-DOS | 6d | 2026-08-22 A | 2026-08-27 A | RHD4PRSHLDOSSW1101, RHD4PRSHLSTAGSW1202 | 100% |  |
| RHD4PRSHLSTAGSW1001 |  | Staging for UPVC pipes Zone 2 - SHL-DOS | 6d | 2026-08-28 A | 2026-09-02 A | RHD4PRSHLDOSSW1001 | 100% |  |
| RHD4PRSHLSTAGSW1401 |  | Staging for Metal Works (Stairs - Manhole Covers) Zone 2 - SHL-DOS | 6d | 2026-11-16 | 2026-11-21 | RHD4PRSHLDOSSW1401 |  | -201d |
|  | 3 | **RHD4-02-002-SHL-Staging Time - STAG -Sewage Network - SW - Zone 3** |  | 2026-08-15 | 2026-11-27 |  |  |  |
| RHD4PRSHLSTAGSW1302 |  | Staging for Precast Concrete Zone 3 - SHL-DOS | 6d | 2026-08-15 A | 2026-08-20 A | RHD4PRSHLDOSSW1302, RHD4PRSHLSTAGSW1506 | 100% |  |
| RHD4PRSHLSTAGSW1502 |  | Staging for HDPE pipes Zone 3 - SHL-DOS | 6d | 2026-08-16 A | 2026-08-21 A | RHD4PRSHLDOSSW1502 | 100% |  |
| RHD4PRSHLSTAGSW1102 |  | Staging for GRP pipes Zone 3 - SHL-DOS | 6d | 2026-09-06 A | 2026-09-11 A | RHD4PRSHLDOSSW1102 | 100% |  |
| RHD4PRSHLSTAGSW1402 |  | Staging for Metal Works (Stairs - Manhole Covers) Zone 3 - SHL-DOS | 6d | 2026-11-16 | 2026-11-21 | RHD4PRSHLDOSSW1402, RHD4PRSHLSTAGSW1502 |  | -196.02d |
| RHD4PRSHLSTAGSW1202 |  | Staging for Valves Zone 3 - SHL-DOS | 6d | 2026-11-22 | 2026-11-27 | RHD4PRSHLDOSSW1202, RHD4PRSHLSTAGSW1102, RHD4PRSHLSTAGSW1206 |  | -208.02d |
|  | 4 | **RHD4-02-002-SHL-Staging Time - STAG -Sewage Network - SW - Zone 4** |  | 2026-08-16 | 2026-11-27 |  |  |  |
| RHD4PRSHLSTAGSW1003 |  | Staging for UPVC pipes Zone 4 - SHL-DOS | 6d | 2026-08-16 A | 2026-08-21 A | RHD4PRSHLDOSSW1003 | 100% |  |
| RHD4PRSHLSTAGSW1303 |  | Staging for Precast Concrete Zone 4 - SHL-DOS | 6d | 2026-08-22 A | 2026-08-27 A | RHD4PRSHLDOSSW1303, RHD4PRSHLSTAGSW1403 | 100% |  |
| RHD4PRSHLSTAGSW1103 |  | Staging for GRP pipes Zone 4 - SHL-DOS | 6d | 2026-08-29 A | 2026-09-03 A | RHD4PRSHLSTAGSW1303, RHD4PRSHLSTAGSW1402, RHD4PRSHLDOSSW1303, RHD4PRSHLPOSW1100, RHD4PRSHLDOSSW1103 | 100% |  |
| RHD4PRSHLSTAGSW1203 |  | Staging for Valves Zone 4 - SHL-DOS | 6d | 2026-11-16 | 2026-11-21 | RHD4PRSHLDOSSW1203 |  | -202.02d |
| RHD4PRSHLSTAGSW1403 |  | Staging for Metal Works (Stairs - Manhole Covers) Zone 4 - SHL-DOS | 6d | 2026-11-22 | 2026-11-27 | RHD4PRSHLDOSSW1403, RHD4PRSHLSTAGSW1203 |  | -202.02d |

| ID | WBS | Task | Duration | Start | Finish | Predecessors | Complete | Total float |
| --- | --- | --- | --- | --- | --- | --- | --- | --- |
|  | 7 | **RHD4-02-002-SHL-Staging Time - STAG -Sewage Network - SW - Zone 5** |  | 2026-08-13 | 2026-11-20 |  |  |  |
| RHD4PRSHLSTAGSW1004 |  | Staging for UPVC pipes Zone 5 - SHL-DOS | 6d | 2026-08-13 A | 2026-08-18 A | RHD4PRSHLPOSW1000, RHD4PRSHLDOSSW1004, RHD4PRSHLDOSSW1304, RHD4PRSHLPOSW1100, RHD4PRSHLDOSSW1104 | 100% |  |
| RHD4PRSHLSTAGSW1104 |  | Staging for GRP pipes Zone 5 - SHL-DOS | 6d | 2026-08-15 A | 2026-08-20 A | RHD4PRSHLDOSSW1304, RHD4PRSHLPOSW1100, RHD4PRSHLDOSSW1104 | 100% |  |
| RHD4PRSHLSTAGSW1204 |  | Staging for Valves Zone 5 - SHL-DOS | 6d | 2026-08-29 A | 2026-09-03 A | RHD4PRSHLDOSSW1204 | 100% |  |
| RHD4PRSHLSTAGSW1304 |  | Staging for Precast Concrete Zone 5 - SHL-DOS | 6d | 2026-09-01 A | 2026-09-06 A | RHD4PRSHLDOSSW1304, RHD4PRSHLSTAGSW1504, RHD4PRSHLSTAGSW1103, RHD4PRSHLSTAGSW1108, RHD4PRSHLSTAGSW1407, RHD4PRSHLSTAGST1206, RHD4PRSHLSTAGLV1500, RHD4GNPERMITAT2000 | 100% |  |
| RHD4PRSHLSTAGSW1404 |  | Staging for Metal Works (Stairs - Manhole Covers) Zone 5 - SHL-DOS | 6d | 2026-11-10 | 2026-11-15 | RHD4PRSHLDOSSW1404 |  | -195d |
| RHD4PRSHLSTAGSW1504 |  | Staging for HDPE pipes Zone 5 - SHL-DOS | 6d | 2026-11-15 | 2026-11-20 | RHD4PRSHLDOSSW1504, RHD4PRSHLSTAGSW1204 |  | -195.02d |
|  | 5 | **RHD4-02-002-SHL-Staging Time - STAG -Sewage Network - SW - Zone 6** |  | 2026-11-16 | 2026-11-27 |  |  |  |
| RHD4PRSHLSTAGSW1005 |  | Staging for UPVC pipes Zone 6 - SHL-DOS | 6d | 2026-11-16 | 2026-11-21 | RHD4PRSHLDOSSW1305, RHD4PRSHLPOSW1000, RHD4PRSHLDOSSW1005, RHD4PRSHLDOSSW1004, RHD4PRSHLDOSSW1304, RHD4PRSHLPOSW1100, RHD4PRSHLDOSSW1104 |  | -196.02d |
| RHD4PRSHLSTAGSW1305 |  | Staging for Precast Concrete Zone 6 - SHL-DOS | 6d | 2026-11-16 | 2026-11-21 | RHD4PRSHLDOSSW1305 |  | -201d |
| RHD4PRSHLSTAGSW1405 |  | Staging for Metal Works (Stairs - Manhole Covers) Zone 6 - SHL-DOS | 6d | 2026-11-22 | 2026-11-27 | RHD4PRSHLDOSSW1405 |  | -202.02d |
|  | 8 | **RHD4-02-002-SHL-Staging Time - STAG -Sewage Network - SW - Zone 7** |  | 2026-08-04 | 2026-11-27 |  |  |  |
| RHD4PRSHLSTAGSW1006 |  | Staging for UPVC pipes Zone 7 - SHL-DOS | 6d | 2026-08-04 A | 2026-08-09 A | RHD4PRSHLPOSW1000, RHD4PRSHLDOSSW1006, RHD4PRSHLDOSSW1306, RHD4PRSHLPOSW1100, RHD4PRSHLDOSSW1106, RHD4PRSHLDOSSW1004, RHD4PRSHLDOSSW1304, RHD4PRSHLDOSSW1104 | 100% |  |
| RHD4PRSHLSTAGSW1106 |  | Staging for GRP pipes Zone 7 - SHL-DOS | 6d | 2026-08-04 A | 2026-08-09 A | RHD4PRSHLDOSSW1306, RHD4PRSHLPOSW1100, RHD4PRSHLDOSSW1106 | 100% |  |
| RHD4PRSHLSTAGSW1206 |  | Staging for Valves Zone 7 - SHL-DOS | 6d | 2026-11-16 | 2026-11-21 | RHD4PRSHLDOSSW1206 |  | -208.02d |
| RHD4PRSHLSTAGSW1306 |  | Staging for Precast Concrete Zone 7 - SHL-DOS | 6d | 2026-11-16 | 2026-11-21 | RHD4PRSHLDOSSW1306 |  | -196.02d |
| RHD4PRSHLSTAGSW1506 |  | Staging for HDPE pipes Zone 7 - SHL-DOS | 6d | 2026-11-16 | 2026-11-21 | RHD4PRSHLDOSSW1506 |  | -202.02d |
| RHD4PRSHLSTAGSW1406 |  | Staging for Metal Works (Stairs - Manhole Covers) Zone 7 - SHL-DOS | 6d | 2026-11-22 | 2026-11-27 | RHD4PRSHLDOSSW1406 |  | -202.02d |
|  | 6 | **RHD4-02-002-SHL-Staging Time - STAG -Sewage Network - SW - Zone 8** |  | 2026-11-10 | 2026-11-27 |  |  |  |
| RHD4PRSHLSTAGSW1107 |  | Staging for GRP pipes Zone 8 - SHL-DOS | 6d | 2026-11-10 | 2026-11-15 | RHD4PRSHLDOSSW1107 |  | -202.02d |
| RHD4PRSHLSTAGSW1307 |  | Staging for Precast Concrete Zone 8 - SHL-DOS | 6d | 2026-11-16 | 2026-11-21 | RHD4PRSHLDOSSW1307, RHD4PRSHLSTAGSW1107 |  | -202.02d |
| RHD4PRSHLSTAGSW1407 |  | Staging for Metal Works (Stairs - Manhole Covers) Zone 8 - SHL-DOS | 6d | 2026-11-16 | 2026-11-21 | RHD4PRSHLDOSSW1407 |  | -201d |
| RHD4PRSHLSTAGSW1007 |  | Staging for UPVC pipes Zone 8 - SHL-DOS | 6d | 2026-11-22 | 2026-11-27 | RHD4PRSHLDOSSW1007 |  | -202.02d |
|  | 9 | **RHD4-02-002-SHL-Staging Time - STAG -Sewage Network - SW - Zone 9** |  | 2026-11-16 | 2026-12-03 |  |  |  |
| RHD4PRSHLSTAGSW1308 |  | Staging for Precast Concrete Zone 9 - SHL-DOS | 6d | 2026-11-16 | 2026-11-21 | RHD4PRSHLDOSSW1308 |  | -201d |
| RHD4PRSHLSTAGSW1408 |  | Staging for Metal Works (Stairs - Manhole Covers) Zone 9 - SHL-DOS | 6d | 2026-11-16 | 2026-11-21 | RHD4PRSHLDOSSW1408 |  | -201d |
| RHD4PRSHLSTAGSW1008 |  | Staging for UPVC pipes Zone 9 - SHL-DOS | 6d | 2026-11-22 | 2026-11-27 | RHD4PRSHLDOSSW1008 |  | -202.02d |
| RHD4PRSHLSTAGSW1108 |  | Staging for GRP pipes Zone 9 - SHL-DOS | 6d | 2026-11-28 | 2026-12-03 | RHD4PRSHLSTAGSW1101, RHD4PRSHLSTAGSW1302, RHD4PRSHLSTAGSW1307, RHD4PRSHLDOSSW1308, RHD4PRSHLPOSW1100, RHD4PRSHLDOSSW1108 |  | -208.02d |
|  | 116 | **RHD4-02-002-SHL-Staging Time - STAG -Potable Water Network - PT** |  | 2026-09-07 | 2027-01-06 |  |  |  |
|  | 1 | **RHD4-02-002-SHL-Staging Time - STAG -Potable Water Network - PT - Crossings** |  | 2026-11-16 | 2026-12-03 |  |  |  |
| RHD4PRSHLSTAPTCr1000 |  | Staging for HDPE pipes - PTCr - SHL-STAG | 6d | 2026-11-16 | 2026-11-21 | RHD4PRSHLDOSPTCr1000 |  | -201d |
| RHD4PRSHLSTAPTCr1200 |  | Staging for Valves - PTCr - SHL-STAG | 6d | 2026-11-16 | 2026-11-21 | RHD4PRSHLDOSPTCr1200 |  | -214.02d |
| RHD4PRSHLSTAPTCr1100 |  | Staging for Precast Concrete - PTCr - SHL-STAG | 6d | 2026-11-22 | 2026-11-27 | RHD4PRSHLDOSPTCr1100, RHD4PRSHLSTAPTCr1200 |  | -214.02d |
| RHD4PRSHLSTAPTCr1500 |  | Staging for Fire Hydrants - PTCr - SHL-STAG | 6d | 2026-11-22 | 2026-11-27 | RHD4PRSHLDOSPTCr1500 |  | -208.02d |
| RHD4PRSHLSTAPTCr1300 |  | Staging for Stem and Surface box - PTCr - SHL-STAG | 6d | 2026-11-28 | 2026-12-03 | RHD4PRSHLDOSPTCr1300, RHD4PRSHLSTAPTCr1500 |  | -208.02d |
| RHD4PRSHLSTAPTCr1400 |  | Staging for Metal Works (Chamber's Covers) - PTCr - SHL-STAG | 6d | 2026-11-28 | 2026-12-03 | RHD4PRSHLDOSPTCr1400, RHD4PRSHLSTAPTCr1100 |  | -214.02d |
|  | 2 | **RHD4-02-002-SHL-Staging Time - STAG -Potable Water Network - PT - Network** |  | 2026-09-07 | 2027-01-06 |  |  |  |
| RHD4PRSHLSTAGPT1000 |  | Staging for HDPE pipes - PT - SHL-STAG | 6d | 2026-09-07 A | 2026-09-12 A | RHD4PRSHLDOSPT1000 | 100% |  |
| RHD4PRSHLSTAGPT1100 |  | Staging for Precast Concrete - PT - SHL-STAG | 6d | 2026-09-14 A | 2026-09-19 A | RHD4PRSHLDOSPT1100 | 100% |  |
| RHD4PRSHLSTAGPT1200 |  | Staging for Valves - PT - SHL-STAG | 6d | 2026-11-16 | 2026-11-21 | RHD4PRSHLDOSPT1200 |  | -201d |
| RHD4PRSHLSTAGPT1400 |  | Staging for Metal Works (Chamber's Covers) - PT - SHL-STAG | 6d | 2026-11-23 | 2026-11-28 | RHD4PRSHLDOSPT1400 |  | -203.02d |
| RHD4PRSHLSTAGPT1500 |  | Staging for Fire Hydrants - PT - SHL-STAG | 6d | 2026-11-30 | 2026-12-05 | RHD4PRSHLDOSPT1500 |  | -210.02d |
| RHD4PRSHLSTAGPT1300 |  | Staging for Stem and Surface box - PT - SHL-STAG | 6d | 2027-01-01 | 2027-01-06 | RHD4PRSHLDOSPT1300 |  | -235d |
|  | 117 | **RHD4-02-002-SHL-Staging Time - STAG -Irrigation Network - IRR** |  | 2026-11-16 | 2027-01-12 |  |  |  |
|  | 1 | **RHD4-02-002-SHL-Staging Time - STAG -Irrigation Network - IRR - Crossings** |  | 2026-11-16 | 2026-12-09 |  |  |  |
| RHD4PRSHLSTAIRRC1000 |  | Staging for HDPE pipes - IRRC - SHL-STAG | 6d | 2026-11-16 | 2026-11-21 | RHD4PRSHLDOSIRRC1000 |  | -201d |
| RHD4PRSHLSTAIRRC1100 |  | Staging for Valves - IRRC - SHL-STAG | 6d | 2026-11-16 | 2026-11-21 | RHD4PRSHLDOSIRRC1100 |  | -220.02d |
| RHD4PRSHLSTAIRRC1200 |  | Staging for Precast Concrete - IRRC - SHL-STAG | 6d | 2026-11-22 | 2026-11-27 | RHD4PRSHLDOSIRRC1200, RHD4PRSHLSTAIRRC1100, RHD4PRSHLSTAIRRC1100 FF |  | -220.02d |
| RHD4PRSHLSTAIRRC1300 |  | Staging for Stem and Surface box - IRRC - SHL-STAG | 6d | 2026-11-28 | 2026-12-03 | RHD4PRSHLDOSIRRC1300, RHD4PRSHLSTAIRRC1200, RHD4PRSHLSTAIRRC1200 FF |  | -220.02d |
| RHD4PRSHLSTAIRRC1400 |  | Staging for Metal Works (Chamber's Covers) - IRRC - SHL-STAG | 6d | 2026-12-04 | 2026-12-09 | RHD4PRSHLDOSIRRC1400, RHD4PRSHLSTAIRRC1300, RHD4PRSHLSTAIRRC1300 FF |  | -220.02d |
|  | 2 | **RHD4-02-002-SHL-Staging Time - STAG -Irrigation Network - IRR - Network** |  | 2026-11-16 | 2027-01-12 |  |  |  |
| RHD4PRSHLSTAGIRR1000 |  | Staging for HDPE pipes - IRR - SHL-STAG | 6d | 2026-11-16 | 2026-11-21 | RHD4PRSHLDOSIRR1000 |  | -201d |
| RHD4PRSHLSTAGIRR1100 |  | Staging for Valves - IRR - SHL-STAG | 6d | 2026-11-16 | 2026-11-21 | RHD4PRSHLDOSIRR1100 |  | -196.02d |
| RHD4PRSHLSTAGIRR1200 |  | Staging for Precast Concrete - IRR - SHL-STAG | 6d | 2026-11-22 | 2026-11-27 | RHD4PRSHLDOSIRR1200 |  | -202.02d |
| RHD4PRSHLSTAGIRR1300 |  | Staging for Stem and Surface box - IRR - SHL-STAG | 6d | 2027-01-01 | 2027-01-06 | RHD4PRSHLDOSIRR1300 |  | -227d |
| RHD4PRSHLSTAGIRR1400 |  | Staging for Metal Works (Chamber's Covers) - IRR - SHL-STAG | 6d | 2027-01-07 | 2027-01-12 | RHD4PRSHLDOSIRR1400 |  | -233d |
|  | 118 | **RHD4-02-002-SHL-Staging Time - STAG -Medium Voltage - MV** |  | 2026-11-16 | 2026-12-19 |  |  |  |
| RHD4PRSHLSTAGMV1000 |  | Staging for UPVC Pipes for Duct Banks - SHL-STAG | 6d | 2026-11-16 | 2026-11-21 | RHD4PRSHLDOSMV1000 |  | -201d |
| RHD4PRSHLSTAGMV1100 |  | Staging for Medium Voltage Cable 3Cx500 mm2 - SHL-STAG | 6d | 2026-12-14 | 2026-12-19 | RHD4PRSHLDOSMV1100 |  | -229d |
| RHD4PRSHLSTAGMV1200 |  | Staging for Medium Voltage Cable 3Cx50 mm2 - SHL-STAG | 6d | 2026-12-14 | 2026-12-19 | RHD4PRSHLDOSMV1200 |  | -229d |
| RHD4PRSHLSTAGMV1300 |  | Staging for Straight Joints 3Cx50 mm2 - SHL-STAG | 6d | 2026-12-14 | 2026-12-19 | RHD4PRSHLDOSMV1300 |  | -229d |
| RHD4PRSHLSTAGMV1400 |  | Staging for Normally Open Points (Outdoor type) - SHL-STAG | 6d | 2026-12-14 | 2026-12-19 | RHD4PRSHLDOSMV1400 |  | -229d |
|  | 119 | **RHD4-02-002-SHL-Staging Time - STAG -Low Voltage - LV** |  | 2026-11-16 | 2027-01-17 |  |  |  |
| RHD4PRSHLSTAGLV1000 |  | Staging for UPVC Pipes for Duct Banks - SHL-STAG | 6d | 2026-11-16 | 2026-11-21 | RHD4PRSHLDOSLV1000 |  | -201d |
| RHD4PRSHLSTAGLV1100 |  | Staging for Low voltage Cables - SHL-STAG | 6d | 2026-11-16 | 2026-11-21 | RHD4PRSHLDOSLV1100 |  | -201d |
| RHD4PRSHLSTAGLV1200 |  | Staging for Distribution Pillars - SHL-STAG | 6d | 2026-12-07 | 2026-12-12 | RHD4PRSHLDOSLV1200 |  | -222d |
| RHD4PRSHLSTAGLV1300 |  | Staging for KWH Meter mounting Frame - SHL-STAG | 6d | 2026-12-07 | 2026-12-12 | RHD4PRSHLDOSLV1300 |  | -222d |
| RHD4PRSHLSTAGLV1500 |  | Staging for Earthing for Pillars and Panels - SHL-STAG | 6d | 2026-12-07 | 2026-12-12 | RHD4PRSHLDOSLV1500, RHD4PRSHLSTAPTCr1400 |  | -217.02d |
| RHD4PRSHLSTAGLV1400 |  | Staging for Low Voltage Drawpit - SHL-STAG | 6d | 2027-01-11 | 2027-01-17 | RHD4PRSHLDOSLV1400 |  | -231.02d |
|  | 120 | **RHD4-02-002-SHL-Staging Time - STAG -Street Lighting Network -SL** |  | 2026-09-15 | 2027-01-23 |  |  |  |

| ID | WBS | Task | Duration | Start | Finish | Predecessors | Complete | Total float |
| --- | --- | --- | --- | --- | --- | --- | --- | --- |
| RHD4PRSHLSTAGSL1000 |  | Staging for UPVC Pipes for Duct Banks - SHL-STAG | 6d | 2026-09-15 A | 2026-09-20 A | RHD4PRSHLDOSSL1000 | 100% |  |
| RHD4PRSHLSTAGSL1400 |  | Staging for Street Lighting Drawpit - SHL-STAG | 6d | 2026-10-07 A | 2026-10-12 A | RHD4PRSHLDOSSL1400 | 100% |  |
| RHD4PRSHLSTAGSL1200 |  | Staging for Lighting Poles - SHL-STAG | 6d | 2026-10-17 A | 2026-10-22 A | RHD4PRSHLDOSSL1200 | 100% |  |
| RHD4PRSHLSTAGSL1300 |  | Staging for Street Lighting Luminaire - SHL-STAG | 6d | 2026-10-27 A | 2026-11-01 A | RHD4PRSHLDOSSL1300, RHD4PRSHLSTAGSL1200 | 100% |  |
| RHD4PRSHLSTAGSL1100 |  | Staging for Street Lighting Cables - SHL-STAG | 6d | 2027-01-17 | 2027-01-23 | RHD4PRSHLDOSSL1100 |  | -229.02d |
|  | 121 | **RHD4-02-002-SHL-Staging Time - STAG -Landscape Network - LS** |  | 2026-11-10 | 2026-11-15 |  |  |  |
| RHD4PRSHLSTAGLS1000 |  | Staging for Landscape Lighting (Bollard) - SHL-STAG | 6d | 2026-11-10 | 2026-11-15 | RHD4PRSHLPOSL1300 SS, RHD4GNPPMAT1100, RHD4ENMARSUBSL400 SS |  | -195d |
|  | 122 | **RHD4-02-002-SHL-Staging Time - STAG -Telecommunications Network - TC** |  | 2026-09-08 | 2027-02-07 |  |  |  |
| RHD4PRSHLSTAGTC1000 |  | Staging for HDPE Ducts - SHL-STAG | 6d | 2026-09-08 A | 2026-09-13 A | RHD4PRSHLDOSTC1000 | 100% |  |
| RHD4PRSHLSTAGTC1100 |  | Staging for HDPE Road Crossings Ducts - SHL-STAG | 6d | 2027-01-17 | 2027-01-23 | RHD4PRSHLDOSTC1100 |  | -213.02d |
| RHD4PRSHLSTAGTC1200 |  | Staging for Telecommunications Manhole - SHL-STAG | 6d | 2027-02-02 | 2027-02-07 | RHD4PRSHLDOSTC1200 |  | -93d |
|  | 123 | **RHD4-02-002-SHL-Staging Time - STAG -Information and Communication Technologies - ICT** |  | 2026-11-16 | 2027-02-19 |  |  |  |
| RHD4PRSHLSTAGICT1200 |  | Staging for Telecommunications Manhole - SHL-STAG | 6d | 2026-11-16 | 2026-11-21 | RHD4PRSHLDOSICT1200 |  | -196.02d |
| RHD4PRSHLSTAGICT1100 |  | Staging for HDPE Road Crossings Ducts - SHL-STAG | 6d | 2027-02-08 | 2027-02-13 | RHD4PRSHLDOSICT1100 |  | -232d |
| RHD4PRSHLSTAGICT1000 |  | Staging for HDPE Ducts - SHL-STAG | 6d | 2027-02-14 | 2027-02-19 | RHD4PRSHLDOSICT1000 |  | -201d |
|  | 124 | **RHD4-02-002-SHL-Staging Time - STAG -Security Network - CCTV** |  | 2026-11-30 | 2026-12-26 |  |  |  |
| RHD4PRSHLSTACCTV1000 |  | Staging for CCTV Network Poles - SHL-STAG | 6d | 2026-11-30 | 2026-12-05 | RHD4PRSHLDOSCCTV1000 |  | -210.02d |
| RHD4PRSHLSTACCTV1200 |  | Staging for CCTV Panels and Panel's Components - SHL-STAG | 6d | 2026-12-07 | 2026-12-12 | RHD4PRSHLDOSCCTV1200 |  | -217.02d |
| RHD4PRSHLSTACCTV1300 |  | Staging for CCTV Fiber Optic Cables - SHL-STAG | 6d | 2026-12-14 | 2026-12-19 | RHD4PRSHLDOSCCTV1300, RHD4PRSHLSTAIRRC1400 |  | -224.02d |
| RHD4PRSHLSTACCTV1100 |  | Staging for CCTV Network Cameras - SHL-STAG | 6d | 2026-12-21 | 2026-12-26 | RHD4PRSHLDOSCCTV1100 |  | -231.02d |
|  | 125 | **RHD4-02-002-SHL-Staging Time - STAG -Road Works - RD** |  | 2026-11-16 | 2026-12-19 |  |  |  |
| RHD4PRSHLSTAGRD1000 |  | Staging for Aggregate Base Courses - SHL-STAG | 6d | 2026-11-16 | 2026-11-21 | RHD4PRSHLDOSRD1000 |  | -201d |
| RHD4PRSHLSTAGRD1100 |  | Staging for Bituminous Asphalt Layers - SHL-STAG | 6d | 2026-11-16 | 2026-11-21 | RHD4PRSHLDOSRD1100 |  | -201d |
| RHD4PRSHLSTAGRD1200 |  | Staging for Precast Concrete Curbstone - SHL-STAG | 6d | 2026-11-16 | 2026-11-21 | RHD4PRSHLDOSRD1200 |  | -201d |
| RHD4PRSHLSTAGRD1600 |  | Staging for Traffic Signage - SHL-STAG | 6d | 2026-11-23 | 2026-11-28 | RHD4PRSHLDOSRD1600 |  | -208d |
| RHD4PRSHLSTAGRD1300 |  | Staging for Interlock Precast Concrete Unit Paving - SHL-STAG | 6d | 2026-11-30 | 2026-12-05 | RHD4PRSHLDOSRD1300 |  | -210.02d |
| RHD4PRSHLSTAGRD1400 |  | Staging for Wheel Stopper - SHL-STAG | 6d | 2026-12-07 | 2026-12-12 | RHD4PRSHLDOSRD1400 |  | -217.02d |
| RHD4PRSHLSTAGRD1500 |  | Staging for Pavement Marking - SHL-STAG | 6d | 2026-12-14 | 2026-12-19 | RHD4PRSHLDOSRD1500 |  | -224.02d |
|  | 1 | **RHD4-02-002-SHL-Staging Time - STAG -Lift Stations - LFS** |  | 2026-11-16 | 2026-12-19 |  |  |  |
| RHD4PRSHLSTAGLFS1700 |  | Staging Time for Ductile Iron Pipes & Fittings - SHL-STAG | 6d | 2026-11-16 | 2026-11-21 | RHD4PRSHLPOLFS1700, RHD4PRSHLDOSLFS1700 |  | -201d |
| RHD4PRSHLSTAGLFS1800 |  | Staging Time for Sewage Lift Station Valves - SHL-STAG | 6d | 2026-11-16 | 2026-11-21 | RHD4PRSHLPOLFS1800, RHD4PRSHLDOSLFS1800 |  | -201d |
| RHD4PRSHLSTAGLFS1900 |  | Staging Time for Basket screen - SHL-STAG | 6d | 2026-11-16 | 2026-11-21 | RHD4PRSHLPOLFS1900, RHD4PRSHLDOSLFS1900 |  | -201d |
| RHD4PRSHLSTAGLFS2600 |  | Staging Time for Low Voltage Cables - SHL-STAG | 6d | 2026-11-16 | 2026-11-21 | RHD4PRSHLPOLFS2600, RHD4PRSHLDOSLFS2600 |  | -201d |
| RHD4PRSHLSTAGLFS2700 |  | Staging Time for Lighting Fixtures - SHL-STAG | 6d | 2026-11-16 | 2026-11-21 | RHD4PRSHLPOLFS2700, RHD4PRSHLDOSLFS2700 |  | -196.02d |
| RHD4PRSHLSTAGLFS1100 |  | Staging Time for Roof Waterproofing System - SHL-STAG | 6d | 2026-11-23 | 2026-11-28 | RHD4PRSHLPOLFS1100, RHD4PRSHLDOSLFS1100 |  | -208d |
| RHD4PRSHLSTAGLFS1200 |  | Staging Time for Bituminous Sheet Waterproofing - SHL-STAG | 6d | 2026-11-23 | 2026-11-28 | RHD4PRSHLPOLFS1200, RHD4PRSHLDOSLFS1200 |  | -208d |
| RHD4PRSHLSTAGLFS1600 |  | Staging Time for Epoxy Coating - SHL-STAG | 6d | 2026-11-23 | 2026-11-28 | RHD4PRSHLPOLFS1600, RHD4PRSHLDOSLFS1600 |  | -208d |
| RHD4PRSHLSTAGLFS2100 |  | Staging Time for UPVC Pipes for Sanitary Drain - SHL-STAG | 6d | 2026-11-23 | 2026-11-28 | RHD4PRSHLPOLFS2100, RHD4PRSHLDOSLFS2100 |  | -208d |
| RHD4PRSHLSTAGLFS2400 |  | Staging Time for lighting and power panel boards - SHL-STAG | 6d | 2026-11-23 | 2026-11-28 | RHD4PRSHLPOLFS2400, RHD4PRSHLDOSLFS2400 |  | -208d |
| RHD4PRSHLSTAGLFS3000 |  | Staging Time for Fire Alarm System - SHL-STAG | 6d | 2026-11-23 | 2026-11-28 | RHD4PRSHLPOLFS3000, RHD4PRSHLDOSLFS3000 |  | -208d |
| RHD4PRSHLSTAGLFS1300 |  | Staging Time for Fluid-Applied Waterproofing - SHL-STAG | 6d | 2026-11-30 | 2026-12-05 | RHD4PRSHLPOLFS1300, RHD4PRSHLDOSLFS1300 |  | -215d |
| RHD4PRSHLSTAGLFS2300 |  | Staging Time for Motor Control Center (MCC) - SHL-STAG | 6d | 2026-11-30 | 2026-12-05 | RHD4PRSHLPOLFS2300, RHD4PRSHLDOSLFS2300 |  | -215d |
| RHD4PRSHLSTAGLFS2800 |  | Staging Time for Wiring Devices - SHL-STAG | 6d | 2026-11-30 | 2026-12-05 | RHD4PRSHLPOLFS2800, RHD4PRSHLDOSLFS2800 |  | -215d |
| RHD4PRSHLSTAGLFS1000 |  | Staging Time for Metal Ladder and checkered Plate - SHL-STAG | 6d | 2026-12-07 | 2026-12-12 | RHD4PRSHLPOLFS1000, RHD4PRSHLDOSLFS1000 |  | -217.02d |
| RHD4PRSHLSTAGLFS1400 |  | Staging Time for Metal Doors and Access Doors and Frames - SHL-STAG | 6d | 2026-12-07 | 2026-12-12 | RHD4PRSHLPOLFS1400, RHD4PRSHLDOSLFS1400 |  | -222d |
| RHD4PRSHLSTAGLFS2200 |  | Staging Time for wall mounted Split/AC - SHL-STAG | 6d | 2026-12-07 | 2026-12-12 | RHD4PRSHLPOLFS2200, RHD4PRSHLDOSLFS2200 |  | -222d |
| RHD4PRSHLSTAGLFS2900 |  | Staging Time for Enclosed Switches and Circuit Breakers - SHL-STAG | 6d | 2026-12-07 | 2026-12-12 | RHD4PRSHLPOLFS2900, RHD4PRSHLDOSLFS2900 |  | -222d |
| RHD4PRSHLSTAGLFS1500 |  | Staging Time for Painting - SHL-STAG | 6d | 2026-12-14 | 2026-12-19 | RHD4PRSHLPOLFS1500, RHD4PRSHLDOSLFS1500 |  | -229d |
| RHD4PRSHLSTAGLFS2500 |  | Staging Time for Earthing for Lift Stations - SHL-STAG | 6d | 2026-12-14 | 2026-12-19 | RHD4PRSHLPOLFS2500, RHD4PRSHLDOSLFS2500 |  | -229d |
| RHD4PRSHLSTAGLFS3100 |  | Staging Time for Fences and Gates - SHL-STAG | 6d | 2026-12-14 | 2026-12-19 | RHD4PRSHLDOSLFS3100 |  | -229d |
|  | 137 | **RHD4-02-002-Construction** |  | 2025-12-22 | 2028-11-02 |  |  |  |
|  | 138 | **Demolition - DM** |  | 2026-09-19 | 2028-03-21 |  |  |  |
|  | 139 | **RHD4-02-002-Demolition - DM** |  | 2026-09-19 | 2028-03-21 |  |  |  |
|  | 148 | **Z3** |  | 2026-09-19 | 2028-01-02 |  |  |  |
|  | 149 | **RHD4-02-002-Demolition - DM-Z3-(RD-C-1 /1)** |  |  |  |  |  |  |
|  | 150 | **RHD4-02-002-Demolition - DM-Z3-(RD-C-8 /3)** |  | 2026-09-19 | 2028-01-02 |  |  |  |
| RHD4CZ3C083DM1200 |  | Removal of Trees for Road (RD-C-8 /3) - (B1.02 41 00.03)-Z3-C083-DM | 4d | 2026-09-19 A | 2028-01-02 | RHD4ENSDZ3APPEW100, RHD4CZ3C083DM2000 | 82% | -82d |
| RHD4CZ3C083DM1000 |  | Removal of curbstone for Road (RD-C-8 /3) - (B1.02 41 00.01)-Z3-C083-DM | 3d | 2027-11-17 | 2027-11-20 | RHD4CZ4A013SL5200, RHD4CZ1C081RW3000 |  | -82d |
| RHD4CZ3C083DM1100 |  | Removal of sidewalk for Road (RD-C-8 /3) - (B1.02 41 00.02)-Z3-C083-DM | 9d | 2027-11-21 | 2027-11-30 | RHD4CZ3C083DM1000 |  | -82d |
| RHD4CZ3C083DM1300 |  | Removal of existing New Jersy for Road (RD-C-8 /3) - (B1.02 41 00.04)-Z3-C083-DM | 2d | 2027-12-01 | 2027-12-02 | RHD4GNPERMITENV3000, RHD4CZ3C083DM1100 |  | -82d |
| RHD4CZ3C083DM1400 |  | Relocation of existing Electrical cable for Road (RD-C-8 /3) - (B1.02 41 00.09)-Z3-C083-DM | 7d | 2027-12-04 | 2027-12-11 | RHD4CZ3C083DM1300 |  | -82d |
| RHD4CZ3C083DM1500 |  | Relocation of existing Electrical manhole for Road (RD-C-8 /3) - (B1.02 41 00.10)-Z3-C083-DM | 3d | 2027-12-12 | 2027-12-14 | RHD4CZ3C083DM1400 |  | -82d |
| RHD4CZ3C083DM1600 |  | Relocation of existing Sewer manholes for Road (RD-C-8 /3) - (B1.02 41 00.11)-Z3-C083-DM | 2d | 2027-12-15 | 2027-12-16 | RHD4CZ3C083DM1500 |  | -82d |
| RHD4CZ3C083DM1700 |  | Relocation of existing Storm manholes for Road (RD-C-8 /3) - (B1.02 41 00.12)-Z3-C083-DM | 2d | 2027-12-18 | 2027-12-19 | RHD4CZ3C083DM1600 |  | -82d |
| RHD4CZ3C083DM1800 |  | Relocation of existing Waterline for Road (RD-C-8 /3) - (B1.02 41 00.13)-Z3-C083-DM | 6d | 2027-12-20 | 2027-12-26 | RHD4CZ3C083DM1700 |  | -82d |
| RHD4CZ3C083DM2000 |  | Relocation of existing Medium tension Pole for Road (RD-C-8 /3) - (B1.02 41 00.15)-Z3-C083-DM | 4d | 2027-12-27 | 2027-12-30 | RHD4CZ3C083DM1800 |  | -82d |
|  | 143 | **Z2** |  | 2028-01-03 | 2028-02-05 |  |  |  |
|  | 144 | **RHD4-02-002-Demolition - DM-Z2-(RD-C-8 /2)** |  | 2028-01-03 | 2028-02-05 |  |  |  |
| RHD4CZ2C082DM1000 |  | Removal of curbstone for Road (RD-C-8 /2) - (B1.02 41 00.01)-Z2-C082-DM | 4d | 2028-01-03 | 2028-01-06 | RHD4CZ3C083DM1000, RHD4CZ3C083DM1200 |  | -82d |
| RHD4CZ2C082DM1100 |  | Removal of sidewalk for Road (RD-C-8 /2) - (B1.02 41 00.02)-Z2-C082-DM | 8d | 2028-01-08 | 2028-01-16 | RHD4CZ2C082DM1000 |  | -82d |

| ID | WBS | Task | Duration | Start | Finish | Predecessors | Complete | Total float |
| --- | --- | --- | --- | --- | --- | --- | --- | --- |
| RHD4CZ2C082DM1300 |  | Removal of existing New Jersy for Road (RD-C-8 /2) - (B1.02 41 00.04)-Z2-C082-DM | 2d | 2028-01-17 | 2028-01-18 | RHD4GNPERMITENV3000, RHD4CZ2C082DM1100 |  | -82d |
| RHD4CZ2C082DM1500 |  | Relocation of existing Electrical manhole for Road (RD-C-8 /2) - (B1.02 41 00.10)-Z2-C082-DM | 3d | 2028-01-19 | 2028-01-22 | RHD4CZ2C082DM1300 |  | -82d |
| RHD4CZ2C082DM1800 |  | Relocation of existing Waterline for Road (RD-C-8 /2) - (B1.02 41 00.13)-Z2-C082-DM | 12d | 2028-01-23 | 2028-02-05 | RHD4CZ2C082DM1500, RHD4CZ3C083DM1200 FF |  | -82d |
|  | 140 | **Z1** |  | 2028-02-06 | 2028-03-21 |  |  |  |
|  | 141 | **RHD4-02-002-Demolition - DM-Z1-(RD-C-8 /1)** |  | 2028-02-06 | 2028-03-21 |  |  |  |
| RHD4CZ1C081DM1000 |  | Removal of curbstone for Road (RD-C-8 /1) - (B1.02 41 00.01)-Z1-C081-DM | 5d | 2028-02-06 | 2028-02-10 | RHD4CZ2C082DM1000, RHD4CZ2C082DM1800 |  | -82d |
| RHD4CZ1C081DM1100 |  | Removal of sidewalk for Road (RD-C-8 /1) - (B1.02 41 00.02)-Z1-C081-DM | 8d | 2028-02-12 | 2028-02-20 | RHD4CZ1C081DM1000 |  | -82d |
| RHD4CZ1C081DM1300 |  | Removal of existing New Jersy for Road (RD-C-8 /1) - (B1.02 41 00.04)-Z1-C081-DM | 4d | 2028-02-21 | 2028-02-26 | RHD4GNPERMITENV3000, RHD4CZ1C081DM1100 |  | -82d |
| RHD4CZ1C081DM1600 |  | Relocation of existing Sewer manholes for Road (RD-C-8 /1) - (B1.02 41 00.11)-Z1-C081-DM | 2d | 2028-03-01 | 2028-03-02 | RHD4CZ1C081DM1300 |  | -82d |
| RHD4CZ1C081DM1800 |  | Relocation of existing Waterline for Road (RD-C-8 /1) - (B1.02 41 00.13)-Z1-C081-DM | 11d | 2028-03-04 | 2028-03-15 | RHD4CZ1C081DM1600 |  | -82d |
| RHD4CZ1C081DM1900 |  | Relocation of existing light poles for Road (RD-C-8 /1) - (B1.02 41 00.14)-Z1-C081-DM | 2d | 2028-03-16 | 2028-03-18 | RHD4CZ1C081DM1800 |  | -82d |
| RHD4CZ1C081DM2000 |  | Relocation of existing Medium tension Pole for Road (RD-C-8 /1) - (B1.02 41 00.15)-Z1-C081-DM | 3d | 2028-03-19 | 2028-03-21 | RHD4CZ1C081DM1900, RHD4CZ2C082DM1800 FF |  | -82d |
|  | 152 | **Earthworks - EW** |  | 2025-12-22 | 2028-02-10 |  |  |  |
|  | 153 | **RHD4-02-002-Block Works-EX** |  | 2026-02-16 | 2027-08-16 |  |  |  |
|  | 175 | **RHD4-02-002-Z6-Block Wokrs - Excavation** |  | 2026-02-17 | 2027-02-28 |  |  |  |
|  | 176 | **RHD4-02-002-Block Works-EX-Z6-BLOCK-15** |  | 2026-03-17 | 2026-09-30 |  |  |  |
| RHD4CZ6B15EX1000 |  | Excavation works for Block 15 - (B1.31 23 16.01)-Z6-B15-EX | 9d | 2026-03-17 A | 2026-09-30 A | RHD4ENMSEW2000, RHD4ENMSEW2010, RHD4ENSDZ6APPEW100 SS, RHD4PRSHLDOSST1008, RHD4PRSHLDOSST1300 | 100% |  |
|  | 179 | **RHD4-02-002-Block Works-EX-Z6-BLOCK-Z6** |  | 2026-03-15 | 2026-09-30 |  |  |  |
| RHD4CZ6BZ6EX1000 |  | Excavation works for Block BZ6 - (B1.31 23 16.01)-Z6-BZ6-EX | 9d | 2026-03-15 A | 2026-09-30 A | RHD4CZ6B15EX1000, RHD4ENMSEW2000, RHD4ENMSEW2010, RHD4ENSDZ6APPEW100 SS, RHD4CZ7C02ST1408 | 100% |  |
|  | 178 | **RHD4-02-002-Block Works-EX-Z6-BLOCK-17** |  | 2026-02-17 | 2027-02-28 |  |  |  |
| RHD4CZ6B17EX1000 |  | Excavation works for Block 17 - Stage 1 - (B1.31 23 16.01)-Z6-B17-EX | 9d | 2026-02-17 A | 2026-03-08 A | RHD4CZ6BZ6EX1000, RHD4ENMSEW2000, RHD4ENMSEW2010, RHD4ENSDZ6APPEW100 SS | 100% |  |
| RHD4CZ6B17EX1001 |  | Excavation works for Block 17 - Stage 2 - (B1.31 23 16.01)-Z6-B17-EX | 9d | 2026-03-09 A | 2026-03-29 A | RHD4CZ6B17EX1000, RHD4ENMSEW2000, RHD4ENMSEW2010, RHD4ENSDZ6APPEW100 SS | 100% |  |
| RHD4CZ6B17EX1002 |  | Excavation works for Block 17 - Stage 3 - (B1.31 23 16.01)-Z6-B17-EX(Completed) | 9d | 2026-08-04 A | 2027-02-28 | RHD4CZ6B17EX1001, RHD4ENMSEW2000, RHD4ENMSEW2010, RHD4ENSDZ6APPEW100 SS | 87% | -146.02d |
|  | 177 | **RHD4-02-002-Block Works-EX-Z6-BLOCK-16** |  | 2026-03-07 | 2026-08-03 |  |  |  |
| RHD4CZ6B16EX1000 |  | Excavation works for Block 16 - (B1.31 23 16.01)-Z6-B16-EX(Completed) | 9d | 2026-03-07 A | 2026-08-03 A | RHD4ENMSEW2000, RHD4CZ2L102SW2500, RHD4ENMSEW2010, RHD4ENSDZ6APPEW100 SS, RHD4CZ6B17EX1002 SS | 100% |  |
|  | 169 | **RHD4-02-002-Z5-Block Wokrs - Excavation** |  | 2026-02-16 | 2027-06-26 |  |  |  |
|  | 171 | **RHD4-02-002-Block Works-EX-Z5-BLOCK-11** |  | 2026-03-23 | 2026-07-30 |  |  |  |
| RHD4CZ5B11EX1000 |  | Excavation works for Block 11 - Stage 1 - (B1.31 23 16.01)-Z5-B11-EX | 12d | 2026-03-23 A | 2026-04-05 A | RHD4ENMSEW2000, RHD4ENMSEW2010, RHD4ENSDZ5APPEW100 SS, RHD4CZ5B12EX1003 | 100% |  |
| RHD4CZ5B11EX1001 |  | Excavation works for Block 11 - Stage 2 - (B1.31 23 16.01)-Z5-B11-EX | 7d | 2026-04-06 A | 2026-07-30 A | RHD4CZ5B11EX1000, RHD4ENMSEW2000, RHD4ENMSEW2010, RHD4ENSDZ5APPEW100 SS | 100% |  |
|  | 170 | **RHD4-02-002-Block Works-EX-Z5-BLOCK-10** |  | 2026-03-26 | 2027-06-22 |  |  |  |
| RHD4CZ5B10EX1000 |  | Excavation works for Block 10 - Stage 1 - (B1.31 23 16.01)-Z5-B10-EX | 9d | 2026-03-26 A | 2026-05-23 A | RHD4ENMSEW2000, RHD4ENMSEW2010, RHD4ENSDZ5APPEW100 SS, RHD4CZ6B16EX1000 | 100% |  |
| RHD4CZ5B10EX1001 |  | Excavation works for Block 10 - Stage 2 - (B1.31 23 16.01)-Z5-B10-EX | 9d | 2026-05-24 A | 2027-06-22 | RHD4CZ5B10EX1000, RHD4ENMSEW2000, RHD4ENMSEW2010, RHD4ENSDZ5APPEW100 SS | 52% | -101.96d |
|  | 172 | **RHD4-02-002-Block Works-EX-Z5-BLOCK-12** |  | 2026-02-17 | 2027-06-26 |  |  |  |
| RHD4CZ5B12EX1000 |  | Excavation works for Block 12 - Stage 1 - (B1.31 23 16.01)-Z5-B12-EX | 10d | 2026-02-17 A | 2026-03-01 A | RHD4ENMSEW2000, RHD4ENMSEW2010, RHD4ENSDZ5APPEW100 SS, RHD4CZ5B10EX1001 | 100% |  |
| RHD4CZ5B12EX1001 |  | Excavation works for Block 12 - Stage 2 - (B1.31 23 16.01)-Z5-B12-EX | 11d | 2026-03-02 A | 2026-03-13 A | RHD4CZ5B12EX1000, RHD4ENMSEW2000, RHD4ENMSEW2010, RHD4ENSDZ5APPEW100 SS | 100% |  |
| RHD4CZ5B12EX1002 |  | Excavation works for Block 12 - Stage 3 - (B1.31 23 16.01)-Z5-B12-EX | 5d | 2026-03-14 A | 2026-03-27 A | RHD4CZ5B12EX1001, RHD4ENMSEW2000, RHD4ENMSEW2010, RHD4ENSDZ5APPEW100 SS | 100% |  |
| RHD4CZ5B12EX1003 |  | Excavation works for Block 12 - Stage 4 - (B1.31 23 16.01)-Z5-B12-EX | 5d | 2026-03-28 A | 2027-06-26 | RHD4CZ5B12EX1002, RHD4ENMSEW2000, RHD4ENMSEW2010, RHD4ENSDZ5APPEW100 SS | 21% | -101.96d |
|  | 173 | **RHD4-02-002-Block Works-EX-Z5-BLOCK-13** |  | 2026-02-16 | 2026-02-19 |  |  |  |
| RHD4CZ5B13EX1000 |  | Excavation works for Block 13 - (B1.31 23 16.01)-Z5-B13-EX(Completed) | 15d | 2026-02-16 A | 2026-02-19 A | RHD4ENMSEW2000, RHD4ENMSEW2010, RHD4CZ5B12EX1000 SS, RHD4CZ5B12EX1000 FF, RHD4ENSDZ5APPEW100 SS | 100% |  |
|  | 174 | **RHD4-02-002-Block Works-EX-Z5-BLOCK-14** |  | 2026-03-08 | 2026-08-03 |  |  |  |
| RHD4CZ5B14EX1000 |  | Excavation works for Block 14 - Stage 1 - (B1.31 23 16.01)-Z5-B14-EX | 8d | 2026-03-08 A | 2026-03-25 A | RHD4ENMSEW2000, RHD4ENMSEW2010, RHD4ENSDZ5APPEW100 SS, RHD4CZ5B13EX1000 | 100% |  |
| RHD4CZ5B14EX1001 |  | Excavation works for Block 14 - Stage 2 - (B1.31 23 16.01)-Z5-B14-EX | 8d | 2026-03-26 A | 2026-04-11 A | RHD4CZ5B14EX1000, RHD4ENMSEW2000, RHD4ENMSEW2010, RHD4ENSDZ5APPEW100 SS | 100% |  |
| RHD4CZ5B14EX1002 |  | Excavation works for Block 14 - Stage 3 - (B1.31 23 16.01)-Z5-B14-EX | 14d | 2026-04-12 A | 2026-04-27 A | RHD4CZ5B14EX1001, RHD4ENMSEW2000, RHD4ENMSEW2010, RHD4ENSDZ5APPEW100 SS | 100% |  |
| RHD4CZ5B14EX1003 |  | Excavation works for Block 14 - Stage 4 - (B1.31 23 16.01)-Z5-B14-EX(Completed) | 11d | 2026-04-28 A | 2026-08-03 A | RHD4CZ5B14EX1002, RHD4ENMSEW2000, RHD4ENMSEW2010, RHD4ENSDZ5APPEW100 SS | 100% |  |
|  | 188 | **RHD4-02-002-Z8-Block Wokrs - Excavation** |  | 2026-07-18 | 2027-08-16 |  |  |  |
|  | 193 | **RHD4-02-002-Block Works-EX-Z8-BLOCK-29** |  | 2027-06-26 | 2027-07-06 |  |  |  |
| RHD4CZ8B29EX1000 |  | Excavation works for Block 29 - (B1.31 23 16.01)-Z8-B29-EX | 9d | 2027-06-26 | 2027-07-06 | RHD4ENSDZ8APPEW100, RHD4ENMSEW2000, RHD4ENMSEW2010, RHD4ENSDZ8APPEW100 SS, RHD4CZ8B25EX1000 |  | -98.96d |
|  | 192 | **RHD4-02-002-Block Works-EX-Z8-BLOCK-28** |  | 2027-07-06 | 2027-07-31 |  |  |  |
| RHD4CZ8B28EX1000 |  | Excavation works for Block 28 - (B1.31 23 16.01)-Z8-B28-EX | 21d | 2027-07-06 | 2027-07-31 | RHD4ENSDZ8APPEW100, RHD4ENMSEW2000, RHD4ENMSEW2010, RHD4CZ8B29EX1000 |  | -98.96d |
|  | 191 | **RHD4-02-002-Block Works-EX-Z8-BLOCK-27** |  | 2027-07-31 | 2027-08-09 |  |  |  |
| RHD4CZ8B27EX1000 |  | Excavation works for Block 27 - (B1.31 23 16.01)-Z8-B27-EX | 8d | 2027-07-31 | 2027-08-09 | RHD4ENSDZ8APPEW100, RHD4ENMSEW2000, RHD4ENMSEW2010, RHD4CZ8B28EX1000 |  | -98.96d |
|  | 190 | **RHD4-02-002-Block Works-EX-Z8-BLOCK-26** |  | 2027-08-09 | 2027-08-16 |  |  |  |
| RHD4CZ8B26EX1000 |  | Excavation works for Block 26 - (B1.31 23 16.01)-Z8-B26-EX | 6d | 2027-08-09 | 2027-08-16 | RHD4ENSDZ8APPEW100, RHD4ENMSEW2000, RHD4ENMSEW2010, RHD4CZ8B27EX1000 |  | -98.96d |
|  | 189 | **RHD4-02-002-Block Works-EX-Z8-BLOCK-25** |  | 2026-07-18 | 2026-08-03 |  |  |  |
| RHD4CZ8B25EX1000 |  | Excavation works for Block 25 - (B1.31 23 16.01)-Z8-B25-EX(Completed) | 15d | 2026-07-18 A | 2026-08-03 A | RHD4ENMSEW2000, RHD4ENMSEW2010, RHD4ENSDZ8APPEW100 SS, RHD4CZ5B12EX1003 | 100% |  |
|  | 180 | **RHD4-02-002-Z7-Block Wokrs - Excavation** |  | 2026-03-30 | 2027-06-30 |  |  |  |
|  | 181 | **RHD4-02-002-Block Works-EX-Z7-BLOCK-18** |  | 2026-05-12 | 2026-07-18 |  |  |  |
| RHD4CZ7B18EX1000 |  | Excavation works for Block 18 - (B1.31 23 16.01)-Z7-B18-EX(Completed) | 15d | 2026-05-12 A | 2026-07-18 A | RHD4ENMSEW2000, RHD4ENMSEW2010, RHD4ENSDZ7APPEW100 SS, RHD4CZ8B25EX1000 | 100% |  |
|  | 182 | **RHD4-02-002-Block Works-EX-Z7-BLOCK-19** |  | 2026-04-15 | 2026-08-03 |  |  |  |
| RHD4CZ7B19EX1000 |  | Excavation works for Block 19 - (B1.31 23 16.01)-Z7-B19-EX(Completed) | 15d | 2026-04-15 A | 2026-08-03 A | RHD4ENMSEW2000, RHD4ENMSEW2010, RHD4ENSDZ7APPEW100 SS, RHD4CZ7B18EX1000 SS | 100% |  |
|  | 183 | **RHD4-02-002-Block Works-EX-Z7-BLOCK-20** |  | 2026-03-30 | 2026-08-18 |  |  |  |
| RHD4CZ7B20EX1000 |  | Excavation works for Block 20 - Stage 1 - (B1.31 23 16.01)-Z7-B20-EX | 6d | 2026-03-30 A | 2026-04-07 A | RHD4ENMSEW2000, RHD4ENMSEW2010, RHD4ENSDZ7APPEW100 SS, RHD4CZ7B19EX1000 SS | 100% |  |
| RHD4CZ7B20EX1001 |  | Excavation works for Block 20 - stage 2 - (B1.31 23 16.01)-Z7-B20-EX | 7d | 2026-04-08 A | 2026-04-15 A | RHD4ENMSEW2000, RHD4ENMSEW2010, RHD4ENSDZ7APPEW100 SS, RHD4CZ7B20EX1000 | 100% |  |
| RHD4CZ7B20EX1002 |  | Excavation works for Block 20 - Stage 3 - (B1.31 23 16.01)-Z7-B20-EX | 7d | 2026-04-08 A | 2026-04-15 A | RHD4ENMSEW2000, RHD4ENMSEW2010, RHD4ENSDZ7APPEW100 SS, RHD4CZ7B20EX1001 | 100% |  |
| RHD4CZ7B20EX1003 |  | Excavation works for Block 20 - Stage 4 - (B1.31 23 16.01)-Z7-B20-EX | 6d | 2026-04-18 A | 2026-04-29 A | RHD4ENMSEW2000, RHD4ENMSEW2010, RHD4ENSDZ7APPEW100 SS, RHD4CZ7B20EX1002 | 100% |  |
| RHD4CZ7B20EX1004 |  | Excavation works for Block 20 - Stage 5 - (B1.31 23 16.01)-Z7-B20-EX(Completed) | 7d | 2026-08-04 A | 2026-08-18 A | RHD4ENMSEW2000, RHD4ENMSEW2010, RHD4ENSDZ7APPEW100 SS, RHD4CZ7B20EX1003 | 100% |  |
|  | 184 | **RHD4-02-002-Block Works-EX-Z7-BLOCK-21** |  | 2027-06-26 | 2027-06-30 |  |  |  |
| RHD4CZ7B21EX1000 |  | Excavation works for Block 21 - Stage 1 - (B1.31 23 16.01)-Z7-B21-EX | 2d | 2027-06-26 | 2027-06-28 | RHD4ENMSEW2000, RHD4ENMSEW2010, RHD4ENSDZ7APPEW100 SS, RHD4CZ7B20EX1003, RHD4CZ7B20EX1004 |  | 8.04d |
| RHD4CZ7B21EX1001 |  | Excavation works for Block 21 - stage 2 - (B1.31 23 16.01)-Z7-B21-EX | 2d | 2027-06-28 | 2027-06-30 | RHD4ENSDZ7APPEW100, RHD4ENMSEW2000, RHD4ENMSEW2010, RHD4CZ7B21EX1000 |  | 8.04d |
|  | 185 | **RHD4-02-002-Block Works-EX-Z7-BLOCK-22** |  | 2026-07-16 | 2026-08-03 |  |  |  |

| ID | WBS | Task | Duration | Start | Finish | Predecessors | Complete | Total float |
| --- | --- | --- | --- | --- | --- | --- | --- | --- |
| RHD4CZ7B22EX1000 |  | Excavation works for Block 22 - (B1.31 23 16.01)-Z7-B22-EX(Completed) | 16d | 2026-07-16 A | 2026-08-03 A | RHD4ENMSEW2000, RHD4ENMSEW2010, RHD4ENSDZ7APPEW100 SS, RHD4CZ8B25EX1000 | 100% |  |
|  | 186 | **RHD4-02-002-Block Works-EX-Z7-BLOCK-23** |  | 2026-06-30 | 2027-06-28 |  |  |  |
| RHD4CZ7B23EX1000 |  | Excavation works for Block 23 - (B1.31 23 16.01)-Z7-B23-EX | 10d | 2026-06-30 A | 2027-06-28 | RHD4ENMSEW2000, RHD4ENMSEW2010, RHD4ENSDZ7APPEW100 SS, RHD4CZ7B22EX1000 SS, RHD4CZ7B20EX1000 | 81% | -76.85d |
|  | 187 | **RHD4-02-002-Block Works-EX-Z7-BLOCK-24** |  | 2026-07-18 | 2026-08-03 |  |  |  |
| RHD4CZ7B24EX1000 |  | Excavation works for Block 24 - (B1.31 23 16.01)-Z7-B24-EX(Completed) | 15d | 2026-07-18 A | 2026-08-03 A | RHD4ENMSEW2000, RHD4ENMSEW2010, RHD4ENSDZ7APPEW100 SS, RHD4CZ5B12EX1003, RHD4CZ7B23EX1000 | 100% |  |
|  | 158 | **RHD4-02-002-Z2-Block Wokrs - Excavation** |  | 2026-06-30 | 2026-09-30 |  |  |  |
|  | 159 | **RHD4-02-002-Block Works-EX-Z2-BLOCK-04** |  | 2026-06-30 | 2026-09-18 |  |  |  |
| RHD4CZ2B04EX1000 |  | Excavation works for Block 04 - Stage 1 - (B1.31 23 16.01)-Z2-B04-EX(Completed) | 13d | 2026-06-30 A | 2026-08-03 A | RHD4ENMSEW2000, RHD4ENMSEW2010, RHD4CZ5B14EX1000 | 100% |  |
| RHD4CZ2B04EX1001 |  | Excavation works for Block 04 - Stage 2 - (B1.31 23 16.01)-Z2-B04-EX | 13d | 2026-08-08 A | 2026-09-03 A | RHD4ENMSEW2000, RHD4ENMSEW2010, RHD4ENMSEW2000 FF, RHD4ENMSEW2010 FF, RHD4CZ2B04EX1000, RHD4CZ2B04EX1000 FF | 100% |  |
| RHD4CZ2B04EX1002 |  | Excavation works for Block 04 - Stage 3 - (B1.31 23 16.01)-Z2-B04-EX | 13d | 2026-09-05 A | 2026-09-18 A | RHD4ENSDZ2APPEW100, RHD4ENMSEW2000, RHD4ENMSEW2010, RHD4CZ2B04EX1001, RHD4CZ2B04EX1001 FF | 100% |  |
|  | 160 | **RHD4-02-002-Block Works-EX-Z2-BLOCK-05** |  | 2026-08-29 | 2026-09-30 |  |  |  |
| RHD4CZ2B05EX1000 |  | Excavation works for Block 05 - Stage 1 - (B1.31 23 16.01)-Z2-B05-EX | 9d | 2026-08-29 A | 2026-09-19 A | RHD4ENMSEW2000, RHD4ENMSEW2010, RHD4CZ5B14EX1000, RHD4CZ2B04EX1002 | 100% |  |
| RHD4CZ2B05EX1001 |  | Excavation works for Block 05 - Stage 2 - (B1.31 23 16.01)-Z2-B05-EX | 9d | 2026-09-20 A | 2026-09-30 A | RHD4ENSDZ2APPEW100, RHD4ENMSEW2000, RHD4ENMSEW2010, RHD4CZ2B05EX1000 | 100% |  |
|  | 161 | **RHD4-02-002-Z3-Block Wokrs - Excavation** |  | 2026-06-02 | 2026-08-03 |  |  |  |
|  | 162 | **RHD4-02-002-Block Works-EX-Z3-BLOCK-Z3** |  | 2026-06-02 | 2026-08-03 |  |  |  |
| RHD4CZ3BZ3EX1000 |  | Excavation works for Block BZ3 - Stage 1 - (B1.31 23 16.01)-Z3-BZ3-EX | 5d | 2026-06-02 A | 2026-06-07 A | RHD4ENMSEW2000, RHD4ENMSEW2010, RHD4ENSDZ3APPEW100 SS, RHD4CZ2B04EX1002 | 100% |  |
| RHD4CZ3BZ3EX1001 |  | Excavation works for Block BZ3 - Stage 2 - (B1.31 23 16.01)-Z3-BZ3-EX | 14d | 2026-06-08 A | 2026-06-23 A | RHD4ENMSEW2000, RHD4ENMSEW2010, RHD4ENSDZ3APPEW100 SS, RHD4CZ3BZ3EX1000 | 100% |  |
| RHD4CZ3BZ3EX1002 |  | Excavation works for Block BZ3 - Stage 3 - (B1.31 23 16.01)-Z3-BZ3-EX(Completed) | 13d | 2026-06-24 A | 2026-08-03 A | RHD4ENSDZ3APPEW100 FF, RHD4ENMSEW2000, RHD4ENMSEW2010, RHD4ENSDZ3APPEW100 SS, RHD4CZ3BZ3EX1001 | 100% |  |
|  | 194 | **RHD4-02-002-Z9-Block Wokrs - Excavation** |  | 2026-07-16 | 2027-07-07 |  |  |  |
|  | 196 | **RHD4-02-002-Block Works-EX-Z9-BLOCK-31** |  | 2026-07-16 | 2026-08-03 |  |  |  |
| RHD4CZ9B31EX1000 |  | Excavation works for Block 31 - Stage 1 - (B1.31 23 16.01)-Z9-B31-EX | 3d | 2026-07-16 A | 2026-07-19 A | RHD4ENMSEW2000, RHD4ENMSEW2010, RHD4ENSDZ9APPEW100 SS, RHD4CZ3BZ3EX1000 | 100% |  |
| RHD4CZ9B31EX1001 |  | Excavation works for Block 31 - stage 2 - (B1.31 23 16.01)-Z9-B31-EX | 3d | 2026-07-16 A | 2026-07-19 A | RHD4ENMSEW2000, RHD4ENMSEW2010, RHD4ENSDZ9APPEW100 SS, RHD4CZ9B31EX1000 | 100% |  |
| RHD4CZ9B31EX1002 |  | Excavation works for Block 31 - Stage 3 - (B1.31 23 16.01)-Z9-B31-EX(Completed) | 16d | 2026-07-16 A | 2026-08-03 A | RHD4ENMSEW2000, RHD4ENMSEW2010, RHD4ENSDZ9APPEW100 SS, RHD4CZ9B31EX1001 | 100% |  |
|  | 198 | **RHD4-02-002-Block Works-EX-Z9-BLOCK-33** |  | 2026-07-16 | 2026-08-03 |  |  |  |
| RHD4CZ9B33EX1000 |  | Excavation works for Block 33 - (B1.31 23 16.01)-Z9-B33-EX(Completed) | 16d | 2026-07-16 A | 2026-08-03 A | RHD4ENMSEW2000, RHD4ENMSEW2010, RHD4ENSDZ9APPEW100 SS, RHD4CZ9B31EX1002 SS | 100% |  |
|  | 197 | **RHD4-02-002-Block Works-EX-Z9-BLOCK-32** |  | 2026-07-18 | 2026-08-03 |  |  |  |
| RHD4CZ9B32EX1000 |  | Excavation works for Block 32 - (B1.31 23 16.01)-Z9-B32-EX(Completed) | 15d | 2026-07-18 A | 2026-08-03 A | RHD4ENMSEW2000, RHD4ENMSEW2010, RHD4ENSDZ9APPEW100 SS, RHD4CZ9B33EX1000 SS | 100% |  |
|  | 195 | **RHD4-02-002-Block Works-EX-Z9-BLOCK-30** |  | 2027-06-22 | 2027-07-03 |  |  |  |
| RHD4CZ9B30EX1000 |  | Excavation works for Block 30 - (B1.31 23 16.01)-Z9-B30-EX | 9d | 2027-06-22 | 2027-07-03 | RHD4ENMSEW2000, RHD4ENMSEW2010, RHD4ENSDZ9APPEW100 SS, RHD4CZ9B32EX1000, RHD4CZ9B33EX1000, RHD4CZ9B31EX1001, RHD4CZ9B31EX1002 |  | -42.02d |
|  | 199 | **RHD4-02-002-Block Works-EX-Z9-BLOCK-34** |  | 2026-07-18 | 2027-06-22 |  |  |  |
| RHD4CZ9B34EX1000 |  | Excavation works for Block 34 - (B1.31 23 16.01)-Z9-B34-EX(Completed) | 15d | 2026-07-18 A | 2027-06-22 | RHD4ENMSEW2000, RHD4ENMSEW2010, RHD4CZ3BZ3EX1000 | 79% | -92.02d |
|  | 200 | **RHD4-02-002-Block Works-EX-Z9-BLOCK-35** |  | 2026-07-18 | 2026-08-03 |  |  |  |
| RHD4CZ9B35EX1000 |  | Excavation works for Block 35 - (B1.31 23 16.01)-Z9-B35-EX(Completed) | 15d | 2026-07-18 A | 2026-08-03 A | RHD4ENMSEW2000, RHD4ENMSEW2010, RHD4CZ9B34EX1000 SS | 100% |  |
|  | 201 | **RHD4-02-002-Block Works-EX-Z9-BLOCK-36** |  | 2027-07-03 | 2027-07-07 |  |  |  |
| RHD4CZ9B36EX1000 |  | Excavation works for Block 36 - (B1.31 23 16.01)-Z9-B36-EX | 4d | 2027-07-03 | 2027-07-07 | RHD4ENMSEW2000, RHD4ENMSEW2010, RHD4CZ9B35EX1000, RHD4CZ9B30EX1000, RHD4CZ9B34EX1000 |  | -42.02d |
|  | 163 | **RHD4-02-002-Z4-Block Wokrs - Excavation** |  | 2026-05-23 | 2027-08-09 |  |  |  |
|  | 167 | **RHD4-02-002-Block Works-EX-Z4-BLOCK-09** |  | 2026-05-23 | 2026-07-19 |  |  |  |
| RHD4CZ4B09EX1000 |  | Excavation works for Block 09 - (B1.31 23 16.01)-Z4-B09-EX(Completed) | 15d | 2026-05-23 A | 2026-07-19 A | RHD4ENMSEW2000, RHD4ENMSEW2010, RHD4ENSDZ4APPEW100 SS, RHD4CZ9B35EX1000 | 100% |  |
|  | 166 | **RHD4-02-002-Block Works-EX-Z4-BLOCK-08** |  | 2026-08-15 | 2027-07-25 |  |  |  |
| RHD4CZ4B08EX1000 |  | Excavation works for Block 08 - Stage 1 - (B1.31 23 16.01)-Z4-B08-EX | 15d | 2026-08-15 A | 2027-06-30 | RHD4ENMSEW2000, RHD4ENMSEW2010, RHD4CZ6B17EX1001, RHD4CZ2B04EX1002 | 63% | -91.02d |
| RHD4CZ4B08EX1001 |  | Excavation works for Block 08 - Stage 2 - (B1.31 23 16.01)-Z4-B08-EX | 21d | 2027-06-30 | 2027-07-25 | RHD4CZ4B08EX1000, RHD4ENSDZ4APPEW100, RHD4ENMSEW2000, RHD4ENMSEW2010 |  | -91.02d |
|  | 165 | **RHD4-02-002-Block Works-EX-Z4-BLOCK-07** |  | 2026-06-07 | 2027-07-17 |  |  |  |
| RHD4CZ4B07EX1000 |  | Excavation works for Block 07 - Stage 1 - (B1.31 23 16.01)-Z4-B07-EX(Completed) | 20d | 2026-06-07 A | 2026-08-03 A | RHD4ENMSEW2000, RHD4ENMSEW2010, RHD4ENSDZ4APPEW100 SS, RHD4CZ9B35EX1000 SS | 100% |  |
| RHD4CZ4B07EX1001 |  | Excavation works for Block 07 - Stage 2 - (B1.31 23 16.01)-Z4-B07-EX | 21d | 2027-06-22 | 2027-07-17 | RHD4ENSDZ4APPEW100, RHD4ENMSEW2000, RHD4ENMSEW2010, RHD4ENSDZ4APPEW100 SS, RHD4CZ4B07EX1000 |  | -68.02d |
|  | 164 | **RHD4-02-002-Block Works-EX-Z4-BLOCK-06** |  | 2027-06-22 | 2027-08-09 |  |  |  |
| RHD4CZ4B06EX1000 |  | Excavation works for Block 06 - Stage 1 - (B1.31 23 16.01)-Z4-B06-EX(Completed) | 20d | 2027-06-22 | 2027-07-15 | RHD4ENMSEW2000, RHD4ENMSEW2010, RHD4CZ9B35EX1000 SS |  | -92.02d |
| RHD4CZ4B06EX1001 |  | Excavation works for Block 06 - Stage 2 - (B1.31 23 16.01)-Z4-B06-EX | 21d | 2027-07-15 | 2027-08-09 | RHD4ENSDZ4APPEW100, RHD4ENMSEW2000, RHD4ENMSEW2010, RHD4CZ4B06EX1000 |  | -92.02d |
|  | 168 | **RHD4-02-002-Block Works-EX-Z4-BLOCK-Z4** |  | 2026-10-13 | 2027-08-01 |  |  |  |
| RHD4CZ4BZ4EX1000 |  | Excavation works for Block BZ4 - Stage 1 - (B1.31 23 16.01)-Z4-BZ4-EX | 21d | 2026-10-13 A | 2027-07-07 | RHD4ENSDZ4APPEW100, RHD4ENMSEW2000, RHD4ENMSEW2010, RHD4ENSDZ7APPEW100 SS, RHD4CZ7B18EX1000, RHD4ENSDZ8APPEW100 SS, RHD4CZ8B25EX1000 | 20% | -101.96d |
| RHD4CZ4BZ4EX1001 |  | Excavation works for Block BZ4 - Stage 2 - (B1.31 23 16.01)-Z4-BZ4-EX | 21d | 2027-07-07 | 2027-08-01 | RHD4CZ4BZ4EX1000, RHD4ENSDZ4APPEW100, RHD4ENMSEW2000, RHD4ENMSEW2010 |  | -101.96d |
|  | 154 | **RHD4-02-002-Z1-Block Wokrs - Excavation** |  | 2026-08-15 | 2027-07-04 |  |  |  |
|  | 155 | **RHD4-02-002-Block Works-EX-Z1-BLOCK-01** |  | 2026-08-15 | 2027-07-04 |  |  |  |
| RHD4CZ1B01EX1000 |  | Excavation works for Block 01 - (B1.31 23 16.01)-Z1-B01-EX | 21d | 2026-08-15 A | 2027-07-04 | RHD4ENMSEW2000, RHD4ENMSEW2010, RHD4CZ2B04EX1000 | 99% | -79.02d |
|  | 156 | **RHD4-02-002-Block Works-EX-Z1-BLOCK-02** |  | 2026-08-22 | 2026-10-10 |  |  |  |
| RHD4CZ1B02EX1000 |  | Excavation works for Block 02 - (B1.31 23 16.01)-Z1-B02-EX | 20d | 2026-08-22 A | 2026-10-10 A | RHD4ENMSEW2000, RHD4ENMSEW2010, RHD4CZ1B01EX1000 | 100% |  |
|  | 157 | **RHD4-02-002-Block Works-EX-Z1-BLOCK-03** |  | 2026-08-29 | 2026-09-08 |  |  |  |
| RHD4CZ1B03EX1000 |  | Excavation works for Block 03 - (B1.31 23 16.01)-Z1-B03-EX | 15d | 2026-08-29 A | 2026-09-08 A | RHD4ENMSEW2000, RHD4ENMSEW2010, RHD4CZ1B02EX1000 | 100% |  |
|  | 202 | **RHD4-02-002-Block Works - BF** |  | 2026-03-15 | 2027-09-28 |  |  |  |
|  | 224 | **RHD4-02-002-Z6-Block Works - Backfill** |  | 2026-03-17 | 2027-06-23 |  |  |  |
|  | 225 | **RHD4-02-002-Block Works - BF-Z6-BLOCK-15** |  | 2026-03-28 | 2026-05-03 |  |  |  |
| RHD4CZ6B15BF2000 |  | Backfill Layers works Using Dynamic Compaction Crane (RIC) for Block 15 - (B1.31 23 23.03)-Z6-B15-BF | 7d | 2026-03-28 A | 2026-05-03 A | RHD4CZ6B15EX1000, RHD4ENMARAPPEW100, RHD4CZ3BZ3EX1000 | 100% |  |
|  | 226 | **RHD4-02-002-Block Works - BF-Z6-BLOCK-16** |  | 2026-03-17 | 2026-06-07 |  |  |  |
| RHD4CZ6B16BF2000 |  | Backfill Layers works Using Dynamic Compaction Crane (RIC) for Block 16 - (B1.31 23 23.03)-Z6-B16-BF | 8d | 2026-03-17 A | 2026-06-07 A | RHD4ENMARAPPEW100, RHD4CZ6B15BF2000 | 100% |  |
|  | 227 | **RHD4-02-002-Block Works - BF-Z6-BLOCK-17** |  | 2026-03-17 | 2027-06-23 |  |  |  |
| RHD4CZ6B17BF2000 |  | Backfill Layers works Using Dynamic Compaction Crane (RIC) for Block 17 - (B1.31 23 23.03)-Z6-B17-BF(Completed) | 8d | 2026-03-17 A | 2027-06-23 | RHD4ENMARAPPEW100, RHD4CZ6B17EX1002 SS, RHD4CZ6B16BF2000 | 79% | -59.71d |
|  | 228 | **RHD4-02-002-Block Works - BF-Z6-BLOCK-Z6** |  | 2026-03-23 | 2026-06-06 |  |  |  |
| RHD4CZ6BZ6BF2000 |  | Backfill Layers works Using Dynamic Compaction Crane (RIC) for Block BZ6 - (B1.31 23 23.03)-Z6-BZ6-BF | 20d | 2026-03-23 A | 2026-06-06 A | RHD4CZ6BZ6EX1000, RHD4ENMARAPPEW100, RHD4CZ3BZ3EX1001, RHD4CZ6B17BF2000 | 100% |  |
|  | 237 | **RHD4-02-002-Z8-Block Works - Backfill** |  | 2026-09-21 | 2027-09-28 |  |  |  |
|  | 238 | **RHD4-02-002-Block Works - BF-Z8-BLOCK-25** |  | 2026-09-21 | 2027-07-12 |  |  |  |
| RHD4CZ8B25BF2000 |  | Backfill Layers works Using Dynamic Compaction Crane (RIC) for Block 25 - (B1.31 23 23.03)-Z8-B25-BF | 7d | 2026-09-21 A | 2027-07-12 | RHD4ENMARAPPEW100, RHD4CZ6B17BF2000, RHD4CZ6B17EX1001, RHD4ENMSEW2000, RHD4ENMSEW2010, RHD4ENSDZ6APPEW100 SS, RHD4CZ6B17EX1002, RHD4CZ1B02EX1000, RHD4CZ1B02EX1000 FF | 84% | -68.02d |

| ID | WBS | Task | Duration | Start | Finish | Predecessors | Complete | Total float |
| --- | --- | --- | --- | --- | --- | --- | --- | --- |
|  | 239 | **RHD4-02-002-Block Works - BF-Z8-BLOCK-26** |  | 2027-08-16 | 2027-08-18 |  |  |  |
| RHD4CZ8B26BF2000 |  | Backfill Layers works Using Dynamic Compaction Crane (RIC) for Block 26 - (B1.31 23 23.03)-Z8-B26-BF | 2d | 2027-08-16 | 2027-08-18 | RHD4ENMARAPPEW100, RHD4CZ8B26EX1000, RHD4CZ8B25BF2000 |  | -98.96d |
|  | 240 | **RHD4-02-002-Block Works - BF-Z8-BLOCK-27** |  | 2027-08-18 | 2027-08-28 |  |  |  |
| RHD4CZ8B27BF2000 |  | Backfill Layers works Using Dynamic Compaction Crane (RIC) for Block 27 - (B1.31 23 23.03)-Z8-B27-BF | 8d | 2027-08-18 | 2027-08-28 | RHD4ENMARAPPEW100, RHD4CZ8B27EX1000, RHD4CZ8B26BF2000 |  | -98.96d |
|  | 241 | **RHD4-02-002-Block Works - BF-Z8-BLOCK-28** |  | 2027-08-28 | 2027-09-16 |  |  |  |
| RHD4CZ8B28BF2000 |  | Backfill Layers works Using Dynamic Compaction Crane (RIC) for Block 28 - (B1.31 23 23.03)-Z8-B28-BF | 17d | 2027-08-28 | 2027-09-16 | RHD4ENMARAPPEW100, RHD4CZ8B28EX1000, RHD4CZ8B27BF2000 |  | -98.96d |
|  | 242 | **RHD4-02-002-Block Works - BF-Z8-BLOCK-29** |  | 2027-09-16 | 2027-09-28 |  |  |  |
| RHD4CZ8B29BF2000 |  | Backfill Layers works Using Dynamic Compaction Crane (RIC) for Block 29 - (B1.31 23 23.03)-Z8-B29-BF | 9d | 2027-09-16 | 2027-09-28 | RHD4ENMARAPPEW100, RHD4CZ8B29EX1000, RHD4CZ8B28BF2000 |  | -98.96d |
|  | 243 | **RHD4-02-002-Z9-Block Works - Backfill** |  | 2026-08-04 | 2027-09-23 |  |  |  |
|  | 244 | **RHD4-02-002-Block Works - BF-Z9-BLOCK-30** |  | 2026-08-05 | 2027-07-07 |  |  |  |
| RHD4CZ9B30BF2000 |  | Backfill Layers works Using Dynamic Compaction Crane (RIC) for Block 30 - (B1.31 23 23.03)-Z9-B30-BF | 10d | 2026-08-05 A | 2027-07-07 | RHD4ENMARAPPEW100, RHD4CZ5B11BF2000, RHD4CZ5B12BF2000 | 12% | -56.96d |
|  | 245 | **RHD4-02-002-Block Works - BF-Z9-BLOCK-31** |  | 2026-08-09 | 2027-07-10 |  |  |  |
| RHD4CZ9B31BF2000 |  | Backfill Layers works Using Dynamic Compaction Crane (RIC) for Block 31 - (B1.31 23 23.03)-Z9-B31-BF | 2d | 2026-08-09 A | 2027-07-10 | RHD4ENMARAPPEW100, RHD4CZ9B30BF2000 | 90% | -56.96d |
|  | 246 | **RHD4-02-002-Block Works - BF-Z9-BLOCK-32** |  | 2026-08-11 | 2027-07-15 |  |  |  |
| RHD4CZ9B32BF2000 |  | Backfill Layers works Using Dynamic Compaction Crane (RIC) for Block 32 - (B1.31 23 23.03)-Z9-B32-BF | 5d | 2026-08-11 A | 2027-07-15 | RHD4ENMARAPPEW100, RHD4CZ9B31BF2000, RHD4ENMSEW2000, RHD4ENMSEW2010, RHD4ENSDZ9APPEW100 SS, RHD4CZ9B32EX1000, RHD4CZ9B33EX1000, RHD4CZ9B31EX1001, RHD4CZ9B31EX1002 | 90% | -56.96d |
|  | 247 | **RHD4-02-002-Block Works - BF-Z9-BLOCK-33** |  | 2026-08-09 | 2026-09-30 |  |  |  |
| RHD4CZ9B33BF2000 |  | Backfill Layers works Using Dynamic Compaction Crane (RIC) for Block 33 - (B1.31 23 23.03)-Z9-B33-BF | 15d | 2026-08-09 A | 2026-09-30 A | RHD4ENMARAPPEW100, RHD4CZ9B31BF2000, RHD4CZ9B32BF2000 | 100% |  |
|  | 248 | **RHD4-02-002-Block Works - BF-Z9-BLOCK-34** |  | 2026-08-08 | 2027-07-27 |  |  |  |
| RHD4CZ9B34BF2000 |  | Backfill Layers works Using Dynamic Compaction Crane (RIC) for Block 34 - (B1.31 23 23.03)-Z9-B34-BF | 10d | 2026-08-08 A | 2027-07-27 | RHD4ENMARAPPEW100, RHD4CZ9B33BF2000 | 26% | -56.96d |
|  | 249 | **RHD4-02-002-Block Works - BF-Z9-BLOCK-35** |  | 2026-08-04 | 2027-08-09 |  |  |  |
| RHD4CZ9B35BF2000 |  | Backfill Layers works Using Dynamic Compaction Crane (RIC) for Block 35 - (B1.31 23 23.03)-Z9-B35-BF | 11d | 2026-08-04 A | 2027-08-09 | RHD4ENMARAPPEW100, RHD4CZ9B34BF2000 | 7% | -56.96d |
|  | 250 | **RHD4-02-002-Block Works - BF-Z9-BLOCK-36** |  | 2026-08-04 | 2027-09-23 |  |  |  |
| RHD4CZ9B36BF2000 |  | Backfill Layers works Using Dynamic Compaction Crane (RIC) for Block 36 - (B1.31 23 23.03)-Z9-B36-BF | 6d | 2026-08-04 A | 2027-09-23 A | RHD4ENMARAPPEW100, RHD4CZ9B35BF2000, RHD4CZ8B29BF2000 | 100% |  |
|  | 229 | **RHD4-02-002-Z7-Block Works - Backfill** |  | 2026-04-14 | 2027-07-22 |  |  |  |
|  | 230 | **RHD4-02-002-Block Works - BF-Z7-BLOCK-18** |  | 2026-05-02 | 2026-05-13 |  |  |  |
| RHD4CZ7B18BF2000 |  | Backfill Layers works Using Dynamic Compaction Crane (RIC) for Block 18 - (B1.31 23 23.03)-Z7-B18-BF | 11d | 2026-05-02 A | 2026-05-13 A | RHD4ENMARAPPEW100, RHD4CZ7B18EX1000 SS | 100% |  |
|  | 231 | **RHD4-02-002-Block Works - BF-Z7-BLOCK-19** |  | 2026-04-23 | 2026-06-06 |  |  |  |
| RHD4CZ7B19BF2000 |  | Backfill Layers works Using Dynamic Compaction Crane (RIC) for Block 19 - (B1.31 23 23.03)-Z7-B19-BF | 21d | 2026-04-23 A | 2026-06-06 A | RHD4ENMARAPPEW100, RHD4CZ7B18BF2000, RHD4CZ7B19EX1000 SS | 100% |  |
|  | 232 | **RHD4-02-002-Block Works - BF-Z7-BLOCK-20** |  | 2026-04-14 | 2026-07-04 |  |  |  |
| RHD4CZ7B20BF2000 |  | Backfill Layers works Using Dynamic Compaction Crane (RIC) for Block 20 - (B1.31 23 23.03)-Z7-B20-BF | 19d | 2026-04-14 A | 2026-07-04 A | RHD4ENMARAPPEW100, RHD4CZ7B20EX1004 SS, RHD4CZ7B19BF2000 | 100% |  |
|  | 233 | **RHD4-02-002-Block Works - BF-Z7-BLOCK-21** |  | 2026-07-16 | 2026-08-03 |  |  |  |
| RHD4CZ7B21BF2000 |  | Backfill Layers works Using Dynamic Compaction Crane (RIC) for Block 21 - (B1.31 23 23.03)-Z7-B21-BF(Completed) | 16d | 2026-07-16 A | 2026-08-03 A | RHD4ENMARAPPEW100, RHD4CZ7B20BF2000 | 100% |  |
|  | 234 | **RHD4-02-002-Block Works - BF-Z7-BLOCK-22** |  | 2026-09-20 | 2026-10-11 |  |  |  |
| RHD4CZ7B22BF2000 |  | Backfill Layers works Using Dynamic Compaction Crane (RIC) for Block 22 - (B1.31 23 23.03)-Z7-B22-BF | 18d | 2026-09-20 A | 2026-10-11 A | RHD4ENMARAPPEW100, RHD4CZ1B02BF2000, RHD4CZ7B21EX1001, RHD4CZ7B20BF2000, RHD4CZ7B21BF2000 | 100% |  |
|  | 235 | **RHD4-02-002-Block Works - BF-Z7-BLOCK-23** |  | 2026-10-01 | 2027-07-05 |  |  |  |
| RHD4CZ7B23BF2000 |  | Backfill Layers works Using Dynamic Compaction Crane (RIC) for Block 23 - (B1.31 23 23.03)-Z7-B23-BF | 3d | 2026-10-01 A | 2027-07-05 | RHD4ENMARAPPEW100, RHD4CZ7B23EX1000, RHD4CZ7B22BF2000 FF | 67% | 4.98d |
|  | 236 | **RHD4-02-002-Block Works - BF-Z7-BLOCK-24** |  | 2027-06-28 | 2027-07-22 |  |  |  |
| RHD4CZ7B24BF2000 |  | Backfill Layers works Using Dynamic Compaction Crane (RIC) for Block 24 - (B1.31 23 23.03)-Z7-B24-BF | 21d | 2027-06-28 | 2027-07-22 | RHD4ENMARAPPEW100, RHD4ENMSEW2000, RHD4ENMSEW2010, RHD4ENSDZ7APPEW100 SS, RHD4CZ5B12EX1003, RHD4CZ7B23EX1000, RHD4CZ7B24EX1000 |  | -76.85d |
|  | 218 | **RHD4-02-002-Z5-Block Works - Backfill** |  | 2026-03-15 | 2027-06-24 |  |  |  |
|  | 219 | **RHD4-02-002-Block Works - BF-Z5-BLOCK-10** |  | 2026-03-23 | 2026-07-19 |  |  |  |
| RHD4CZ5B10BF2000 |  | Backfill Layers works Using Dynamic Compaction Crane (RIC) for Block 10 - (B1.31 23 23.03)-Z5-B10-BF | 9d | 2026-03-23 A | 2026-07-19 A | RHD4CZ5B10EX1001, RHD4ENMARAPPEW100, RHD4CZ6B15BF2000 | 100% |  |
|  | 220 | **RHD4-02-002-Block Works - BF-Z5-BLOCK-11** |  | 2026-03-15 | 2026-07-18 |  |  |  |
| RHD4CZ5B11BF2000 |  | Backfill Layers works Using Dynamic Compaction Crane (RIC) for Block 11 - (B1.31 23 23.03)-Z5-B11-BF | 7d | 2026-03-15 A | 2026-07-18 A | RHD4CZ5B11EX1001, RHD4ENMARAPPEW100 | 100% |  |
|  | 221 | **RHD4-02-002-Block Works - BF-Z5-BLOCK-12** |  | 2026-03-15 | 2026-08-04 |  |  |  |
| RHD4CZ5B12BF2000 |  | Backfill Layers works Using Dynamic Compaction Crane (RIC) for Block 12 - (B1.31 23 23.03)-Z5-B12-BF(Completed) | 11d | 2026-03-15 A | 2026-08-04 A | RHD4CZ5B11BF2000 | 100% |  |
|  | 222 | **RHD4-02-002-Block Works - BF-Z5-BLOCK-13** |  | 2026-03-28 | 2026-07-19 |  |  |  |
| RHD4CZ5B13BF2000 |  | Backfill Layers works Using Dynamic Compaction Crane (RIC) for Block 13 - (B1.31 23 23.03)-Z5-B13-BF | 9d | 2026-03-28 A | 2026-07-19 A | RHD4ENMARAPPEW100, RHD4CZ5B13EX1000 SS, RHD4CZ5B10BF2000 | 100% |  |
|  | 223 | **RHD4-02-002-Block Works - BF-Z5-BLOCK-14** |  | 2026-03-24 | 2027-06-24 |  |  |  |
| RHD4CZ5B14BF2000 |  | Backfill Layers works Using Dynamic Compaction Crane (RIC) for Block 14 - (B1.31 23 23.03)-Z5-B14-BF | 9d | 2026-03-24 A | 2027-06-24 | RHD4ENMARAPPEW100, RHD4CZ5B14EX1003 SS, RHD4CZ5B13EX1000 SS, RHD4CZ5B13BF2000 | 71% | -25.67d |
|  | 207 | **RHD4-02-002-Z2-Block Works - Backfill** |  | 2026-08-09 | 2027-06-29 |  |  |  |
|  | 208 | **RHD4-02-002-Block Works - BF-Z2-BLOCK-04** |  | 2026-08-09 | 2027-06-29 |  |  |  |
| RHD4CZ2B04BF2000 |  | Backfill Layers works Using Dynamic Compaction Crane (RIC) for Block 04 - (B1.31 23 23.03)-Z2-B04-BF | 9d | 2026-08-09 A | 2027-06-29 | RHD4ENMARAPPEW100, RHD4CZ5B14BF2000, RHD4CZ2B04EX1002 | 65% | -25.67d |
|  | 209 | **RHD4-02-002-Block Works - BF-Z2-BLOCK-05** |  | 2026-08-26 | 2026-09-28 |  |  |  |
| RHD4CZ2B05BF2000 |  | Backfill Layers works Using Dynamic Compaction Crane (RIC) for Block 05 - Stage 1 - (B1.31 23 23.03)-Z2-B05-BF | 5d | 2026-08-26 A | 2026-08-31 A | RHD4ENMARAPPEW100, RHD4CZ2B04BF2000 | 100% |  |
| RHD4CZ2B05BF2001 |  | Backfill Layers works Using Dynamic Compaction Crane (RIC) for Block 05 - Stage 2 - (B1.31 23 23.03)-Z2-B05-BF | 21d | 2026-09-01 A | 2026-09-28 A | RHD4ENMARAPPEW100, RHD4CZ2B05BF2000 | 100% |  |
|  | 212 | **RHD4-02-002-Z4-Block Works - Backfill** |  | 2026-05-24 | 2027-09-15 |  |  |  |
|  | 214 | **RHD4-02-002-Block Works - BF-Z4-BLOCK-07** |  | 2027-08-16 | 2027-09-12 |  |  |  |
| RHD4CZ4B07BF2000 |  | Backfill Layers works Using Dynamic Compaction Crane (RIC) for Block 07 - (B1.31 23 23.03)-Z4-B07-BF | 2d | 2027-08-16 | 2027-08-18 | RHD4ENMARAPPEW100, RHD4CZ2B04BF2000, RHD4CZ4B07EX1001, RHD4CZ4B08BF4000 SS, RHD4CZ4B08BF4000 FF, RHD4CZ2B05BF2001, RHD4CZ7B24BF2000 |  | 18.98d |
| RHD4CZ4B07BF4000 |  | Soil improvement works by Dynamic Compaction (DC) for Block 07 - Stage 1 - (B1.31 23 23.23.01)-Z4-B07-BF | 21d | 2027-08-18 | 2027-09-12 | RHD4CZ4B07BF2000 |  | 18.98d |
| RHD4CZ4B07BF4001 |  | Soil improvement works by Dynamic Compaction (DC) for Block 07 - Stage 2 - (B1.31 23 23.23.01)-Z4-B07-BF | 21d | 2027-08-18 | 2027-09-12 | RHD4CZ4B07BF4000 SS, RHD4CZ4B07BF4000 FF |  | 18.98d |
|  | 215 | **RHD4-02-002-Block Works - BF-Z4-BLOCK-08** |  | 2026-09-26 | 2027-08-18 |  |  |  |
| RHD4CZ4B08BF2000 |  | Backfill Layers works Using Dynamic Compaction Crane (RIC) for Block 08 - (B1.31 23 23.03)-Z4-B08-BF | 19d | 2026-09-26 A | 2027-07-21 | RHD4ENMARAPPEW100, RHD4CZ4B09BF2001 | 53% | 21.33d |
| RHD4CZ4B08BF4000 |  | Soil improvement works by Dynamic Compaction (DC) for Block 08 - Stage 1 - (B1.31 23 23.23.01)-Z4-B08-BF | 21d | 2027-07-25 | 2027-08-18 | RHD4CZ4B08BF2000, RHD4CZ4B08EX1001 |  | 18.98d |
|  | 216 | **RHD4-02-002-Block Works - BF-Z4-BLOCK-09** |  | 2026-05-24 | 2026-09-28 |  |  |  |
| RHD4CZ4B09BF2000 |  | Backfill Layers works Using Dynamic Compaction Crane (RIC) for Block 09 - Stage 1 - (B1.31 23 23.03)-Z4-B09-BF(Completed | 11d | 2026-05-24 A | 2026-08-03 A | RHD4ENMARAPPEW100, RHD4CZ4B09EX1000 SS | 100% |  |
| RHD4CZ4B09BF2001 |  | Backfill Layers works Using Dynamic Compaction Crane (RIC) for Block 09 - Stage 2 - (B1.31 23 23.03)-Z4-B09-BF | 9d | 2026-08-13 A | 2026-09-28 A | RHD4ENMARAPPEW100, RHD4CZ2B04BF2000, RHD4CZ4B09BF2000, RHD4ENMSEW2000, RHD4ENMSEW2010, RHD4ENSDZ4APPEW100 SS, RHD4CZ4B09EX1000 | 100% |  |
|  | 217 | **RHD4-02-002-Block Works - BF-Z4-BLOCK-Z4** |  | 2026-09-24 | 2027-09-15 |  |  |  |
| RHD4CZ4BZ4BF2000 |  | Backfill Layers works Using Dynamic Compaction Crane (RIC) for Block BZ4 - (B1.31 23 23.03)-Z4-BZ4-BF | 2d | 2026-09-24 A | 2026-10-08 A | RHD4ENMARAPPEW100, RHD4CZ4B06BF4000, RHD4CZ4B06EX1001 | 100% |  |
| RHD4CZ4BZ4BF4000 |  | Soil improvement works by Dynamic Compaction (DC) for Block BZ4 - Stage 1 - (B1.31 23 23.23.01)-Z4-BZ4-BF | 16d | 2027-08-09 | 2027-08-28 | RHD4CZ4BZ4BF2000, RHD4CZ4B09EX1000 |  | -92.02d |
| RHD4CZ4BZ4BF4001 |  | Soil improvement works by Dynamic Compaction (DC) for Block BZ4 - Stage 2 - (B1.31 23 23.23.01)-Z4-BZ4-BF | 16d | 2027-08-28 | 2027-09-15 | RHD4CZ4BZ4BF4000 |  | -92.02d |

| ID | WBS | Task | Duration | Start | Finish | Predecessors | Complete | Total float |
| --- | --- | --- | --- | --- | --- | --- | --- | --- |
|  | 1 | **RHD4-02-002-Block Works - BF-Z4-BLOCK-06** |  | 2027-07-05 | 2027-07-25 |  |  |  |
| RHD4CZ4B06BF4000 |  | Soil improvement works by Dynamic Compaction (DC) for Block 06 - Stage 1 - (B1.31 23 23.23.01)-Z4-B06-BF | 17d | 2027-07-05 | 2027-07-25 | RHD4CZ1B02BF2000 |  | -79.02d |
|  | 203 | **RHD4-02-002-Z1-Block Works - Backfill** |  | 2026-08-25 | 2027-07-07 |  |  |  |
|  | 204 | **RHD4-02-002-Block Works - BF-Z1-BLOCK-01** |  | 2026-08-25 | 2027-07-07 |  |  |  |
| RHD4CZ1B01BF2000 |  | Backfill Layers works Using Dynamic Compaction Crane (RIC) for Block 01 - (B1.31 23 23.03)-Z1-B01-BF | 21d | 2026-08-25 A | 2027-07-07 | RHD4ENMARAPPEW100, RHD4CZ1B02BF2000 | 67% | -42.02d |
|  | 205 | **RHD4-02-002-Block Works - BF-Z1-BLOCK-02** |  | 2026-08-29 | 2027-07-05 |  |  |  |
| RHD4CZ1B02BF2000 |  | Backfill Layers works Using Dynamic Compaction Crane (RIC) for Block 02 - (B1.31 23 23.03)-Z1-B02-BF | 8d | 2026-08-29 A | 2027-07-05 | RHD4ENMARAPPEW100, RHD4CZ1B03EX1000 SS | 75% | -79.02d |
|  | 206 | **RHD4-02-002-Block Works - BF-Z1-BLOCK-03** |  | 2026-08-31 | 2026-09-05 |  |  |  |
| RHD4CZ1B03BF2000 |  | Backfill Layers works Using Dynamic Compaction Crane (RIC) for Block 03 - (B1.31 23 23.03)-Z1-B03-BF | 21d | 2026-08-31 A | 2026-09-05 A | RHD4ENMARAPPEW100, RHD4CZ1B01BF2000 | 100% |  |
|  | 210 | **RHD4-02-002-Z3-Block Works - Backfill** |  | 2026-06-04 | 2026-08-13 |  |  |  |
|  | 211 | **RHD4-02-002-Block Works - BF-Z3-BLOCK-Z3** |  | 2026-06-04 | 2026-08-13 |  |  |  |
| RHD4CZ3BZ3BF2000 |  | Backfill Layers works Using Dynamic Compaction Crane (RIC) for Block BZ3 - Stage 1 - (B1.31 23 23.03)-Z3-BZ3-BF | 15d | 2026-06-04 A | 2026-07-20 A | RHD4ENMARAPPEW100, RHD4CZ6BZ6BF2000, RHD4CZ7B23BF2000 | 100% |  |
| RHD4CZ3BZ3BF2001 |  | Backfill Layers works Using Dynamic Compaction Crane (RIC) for Block BZ3 - Stage 2 - (B1.31 23 23.03)-Z3-BZ3-BF | 19d | 2026-07-23 A | 2026-08-13 A | RHD4ENMARAPPEW100, RHD4CZ3BZ3BF2000, RHD4ENSDZ3APPEW100, RHD4ENMSEW2000, RHD4ENMSEW2010, RHD4ENSDZ3APPEW100 SS, RHD4CZ3BZ3EX1002 | 100% |  |
|  | 251 | **RHD4-02-002-Road Works - RW** |  | 2025-12-24 | 2028-02-10 |  |  |  |
|  | 270 | **RHD4-02-002-Z5-Road Works** |  | 2025-12-28 | 2027-01-18 |  |  |  |
|  | 271 | **RHD4-02-002-Road Works - RW-Z5-(RD-A-1 /4)** |  | 2025-12-28 | 2026-12-02 |  |  |  |
| RHD4CZ5A014RW1000 |  | Excavation works for Road (RD-A-1 /4) - (B1.31 23 16.01)-Z5-A014-RW- Stage 1 | 8d | 2025-12-28 A | 2026-02-15 A | RHD4ENMSEW2000, RHD4ENMSEW2010, RHD4ENSDZ5APPEW100 SS | 100% |  |
| RHD4CZ5A014RW2000 |  | Backfill Layers works Using Dynamic Compaction Crane (RIC) for Road (RD-A-1 /4) - Stage 1 - (B1.31 23 23.03)-Z5-A014-RW | 11d | 2026-01-03 A | 2026-04-17 A | RHD4CZ5A014RW1000 | 100% |  |
| RHD4CZ5A014RW1001 |  | Excavation works for Road (RD-A-1 /4) - (B1.31 23 16.01)-Z5-A014-RW- Stage 2 | 17d | 2026-01-27 A | 2026-02-10 A | RHD4CZ5A014RW1000, RHD4ENMSEW2000, RHD4ENMSEW2010, RHD4ENSDZ5APPEW100 SS | 100% |  |
| RHD4CZ5A014RW2001 |  | Backfill Layers works Using Dynamic Compaction Crane (RIC) for Road (RD-A-1 /4) - Stage 2 - (B1.31 23 23.03)-Z5-A014-RW | 11d | 2026-02-16 A | 2026-02-19 A | RHD4CZ5A014RW2000, RHD4CZ5A014RW1001 | 100% |  |
| RHD4CZ5A014RW3000 |  | Backfill Layers works using Improved fill Material for Road (RD-A-1 /4) - Stage 1 - (B1.31 23 23.01)-Z5-A014-RW | 5d | 2026-11-10 | 2026-11-15 | RHD4CZ5A014RW2000 |  | -173d |
| RHD4CZ5A014RW3001 |  | Backfill Layers works using Improved fill Material for Road (RD-A-1 /4) - Stage 2 - (B1.31 23 23.01)-Z5-A014-RW | 5d | 2026-11-16 | 2026-11-21 | RHD4CZ5A014RW3000, RHD4CZ5A014RW2001 |  | -173d |
| RHD4CZ5A014RW3002 |  | Backfill Layers works using Improved fill Material for Road (RD-A-1 /4) - Stage 3 - (B1.31 23 23.01)-Z5-A014-RW | 5d | 2026-11-22 | 2026-11-26 | RHD4CZ5A014RW3001 |  | -173d |
| RHD4CZ5A014RW3003 |  | Backfill Layers works using Improved fill Material for Road (RD-A-1 /4) - Stage 4 - (B1.31 23 23.01)-Z5-A014-RW | 5d | 2026-11-28 | 2026-12-02 | RHD4CZ5A014RW3002 |  | -173d |
|  | 272 | **RHD4-02-002-Road Works - RW-Z5-(RD-C-5 /1)** |  | 2026-01-03 | 2026-11-23 |  |  |  |
| RHD4CZ5C051RW1000 |  | Excavation works for Road (RD-C-5 /1) - (B1.31 23 16.01)-Z5-C051-RW | 8d | 2026-01-03 A | 2026-02-23 A | RHD4CZ5A014RW1000, RHD4ENMSEW2000, RHD4ENMSEW2010, RHD4ENSDZ5APPEW100 SS | 100% |  |
| RHD4CZ5C051RW2000 |  | Backfill Layers works Using Dynamic Compaction Crane (RIC) for Road (RD-C-5 /1) - (B1.31 23 23.03)-Z5-C051-RW | 2d | 2026-02-04 A | 2026-08-22 A | RHD4CZ5C051RW1000, RHD4CZ5A014RW2001 | 100% |  |
| RHD4CZ5C051RW3000 |  | Backfill Layers works using Improved fill Material for Road (RD-C-5 /1) - (B1.31 23 23.01)-Z5-C051-RW | 12d | 2026-11-10 | 2026-11-23 | RHD4CZ5C051RW2000 |  | -198d |
|  | 273 | **RHD4-02-002-Road Works - RW-Z5-(RD-C-6 /1)** |  | 2026-02-10 | 2026-12-26 |  |  |  |
| RHD4CZ5C061RW1000 |  | Excavation works for Road (RD-C-6 /1) - (B1.31 23 16.01)-Z5-C061-RW | 2d | 2026-02-10 A | 2026-02-19 A | RHD4CZ5C051RW1000, RHD4ENMSEW2000, RHD4ENMSEW2010, RHD4ENSDZ5APPEW100 SS | 100% |  |
| RHD4CZ5C061RW2000 |  | Backfill Layers works Using Dynamic Compaction Crane (RIC) for Road (RD-C-6 /1) - (B1.31 23 23.03)-Z5-C061-RW | 3d | 2026-02-12 A | 2026-02-19 A | RHD4CZ5C061RW1000, RHD4CZ5C051RW2000 | 100% |  |
| RHD4CZ5C061RW3000 |  | Backfill Layers works using Improved fill Material for Road (RD-C-6 /1) - (B1.31 23 23.01)-Z5-C061-RW | 28d | 2026-11-24 | 2026-12-26 | RHD4CZ5C061RW2000, RHD4CZ5C051RW3000 |  | -198d |
|  | 274 | **RHD4-02-002-Road Works - RW-Z5-(RD-L-16)** |  | 2026-01-14 | 2027-01-11 |  |  |  |
| RHD4CZ5L016RW1000 |  | Excavation works for Road (RD-L-16) - Stage 1 - (B1.31 23 16.01)-Z5-L016-RW | 42d | 2026-01-14 A | 2026-04-27 A | RHD4CZ5C061RW1000, RHD4ENMSEW2000, RHD4ENMSEW2010, RHD4ENSDZ5APPEW100 SS | 100% |  |
| RHD4CZ5L016RW1001 |  | Excavation works for Road (RD-L-16) - Stage 2 - (B1.31 23 16.01)-Z5-L016-RW | 8d | 2026-03-08 A | 2026-03-18 A | RHD4CZ5L016RW1000, RHD4ENMSEW2000, RHD4ENMSEW2010, RHD4ENSDZ5APPEW100 SS | 100% |  |
| RHD4CZ5L016RW2000 |  | Backfill Layers works Using Dynamic Compaction Crane (RIC) for Road (RD-L-16) - (B1.31 23 23.03)-Z5-L016-RW | 3d | 2026-03-15 A | 2026-11-10 | RHD4CZ5L016RW1001, RHD4CZ5A014RW2001 | 78% | -153d |
| RHD4CZ5L016RW3000 |  | Backfill Layers works using Improved fill Material for Road (RD-L-16) - (B1.31 23 23.01)-Z5-L016-RW | 14d | 2026-12-27 | 2027-01-11 | RHD4CZ5L016RW2000, RHD4CZ5C061RW3000 |  | -154d |
|  | 275 | **RHD4-02-002-Road Works - RW-Z5-(RD-L-7)** |  | 2026-03-11 | 2026-12-12 |  |  |  |
| RHD4CZ5L07RW1000 |  | Excavation works for Road (RD-L-7) - Stage 1 - (B1.31 23 16.01)-Z5-L07-RW | 18d | 2026-03-11 A | 2026-04-02 A | RHD4CZ5L016RW1000, RHD4ENMSEW2000, RHD4ENMSEW2010, RHD4ENSDZ5APPEW100 SS, RHD4CZ5A014RW3003 | 100% |  |
| RHD4CZ5L07RW1001 |  | Excavation works for Road (RD-L-7) - Stage 2 - (B1.31 23 16.01)-Z5-L07-RW | 18d | 2026-03-11 A | 2026-12-03 | RHD4CZ5L07RW1000, RHD4ENMSEW2000, RHD4ENMSEW2010, RHD4ENSDZ5APPEW100 SS | 94% | -128d |
| RHD4CZ5L07RW2000 |  | Backfill Layers works Using Dynamic Compaction Crane (RIC) for Road (RD-L-7) - (B1.31 23 23.03)-Z5-L07-RW | 8d | 2026-03-26 A | 2026-03-31 A | RHD4CZ5L016RW2000, RHD4CZ5L07RW1000 | 100% |  |
| RHD4CZ5L07RW3000 |  | Backfill Layers works using Improved fill Material for Road (RD-L-7) - (B1.31 23 23.01)-Z5-L07-RW | 8d | 2026-12-03 | 2026-12-12 | RHD4CZ5L07RW2000, RHD4CZ5L07RW1001, RHD4CZ5A014RW3003 |  | -128d |
|  | 276 | **RHD4-02-002-Road Works - RW-Z5-(RD-L-8)** |  | 2026-03-18 | 2027-01-18 |  |  |  |
| RHD4CZ5L08RW1000 |  | Excavation works for Road (RD-L-8) - (B1.31 23 16.01)-Z5-L08-RW | 38d | 2026-03-18 A | 2026-04-01 A | RHD4CZ5L07RW1000, RHD4ENMSEW2000, RHD4ENMSEW2010, RHD4ENSDZ5APPEW100 SS, RHD4CZ3L122RW1000 | 100% |  |
| RHD4CZ5L08RW2000 |  | Backfill Layers works Using Dynamic Compaction Crane (RIC) for Road (RD-L-8) - (B1.31 23 23.03)-Z5-L08-RW | 6d | 2026-03-19 A | 2026-07-01 A | RHD4CZ5L08RW1000, RHD4CZ5L07RW2000 | 100% |  |
| RHD4CZ5L08RW3000 |  | Backfill Layers works using Improved fill Material for Road (RD-L-8) - (B1.31 23 23.01)-Z5-L08-RW | 6d | 2027-01-12 | 2027-01-18 | RHD4CZ5L08RW2000, RHD4CZ5L016RW3000, RHD4CZ5L07RW3000 |  | -154d |
|  | 277 | **RHD4-02-002-Z6-Road Works** |  | 2026-01-14 | 2027-01-06 |  |  |  |
|  | 278 | **RHD4-02-002-Road Works - RW-Z6-(RD-A-1 /5)** |  | 2026-02-19 | 2027-01-06 |  |  |  |
| RHD4CZ6A015RW1000 |  | Excavation works for Road (RD-A-1 /5) - (B1.31 23 16.01)-Z6-A015-RW | 8d | 2026-02-19 A | 2026-12-19 A | RHD4ENMSEW2000, RHD4ENMSEW2010, RHD4ENSDZ6APPEW100 SS, RHD4PRSHLDOSST1307 | 100% |  |
| RHD4CZ6A015RW2000 |  | Backfill Layers works Using Dynamic Compaction Crane (RIC) for Road (RD-A-1 /5) - (B1.31 23 23.03)-Z6-A015-RW | 10d | 2026-03-01 A | 2026-08-22 A | RHD4CZ6A015RW1000 | 100% |  |
| RHD4CZ6A015RW3000 |  | Backfill Layers works using Improved fill Material for Road (RD-A-1 /5) - (B1.31 23 23.01)-Z6-A015-RW | 10d | 2026-12-27 | 2027-01-06 | RHD4CZ6A015RW2000 |  | -189d |
|  | 281 | **RHD4-02-002-Road Works - RW-Z6-(RD-C-6 /2)** |  | 2026-01-14 | 2026-11-28 |  |  |  |
| RHD4CZ6C062RW2000 |  | Backfill Layers works Using Dynamic Compaction Crane (RIC) for Road (RD-C-6 /2) - (B1.31 23 23.03)-Z6-C062-RW | 3d | 2026-01-14 A | 2026-08-22 A | RHD4CZ6C062RW1000 | 100% |  |
| RHD4CZ6C062RW1000 |  | Excavation works for Road (RD-C-6 /2) - (B1.31 23 16.01)-Z6-C062-RW | 18d | 2026-01-29 A | 2026-02-10 A | RHD4ENMSEW2000, RHD4ENMSEW2010, RHD4ENSDZ6APPEW100 SS | 100% |  |
| RHD4CZ6C062RW3000 |  | Backfill Layers works using Improved fill Material for Road (RD-C-6 /2) - (B1.31 23 23.01)-Z6-C062-RW | 16d | 2026-11-10 | 2026-11-28 | RHD4CZ6C062RW2000 |  | -174d |
|  | 280 | **RHD4-02-002-Road Works - RW-Z6-(RD-C-5 /2)** |  | 2026-03-15 | 2027-01-05 |  |  |  |
| RHD4CZ6C052RW1000 |  | Excavation works for Road (RD-C-5 /2) - (B1.31 23 16.01)-Z6-C052-RW | 3d | 2026-03-15 A | 2026-12-27 | RHD4ENMSEW2000, RHD4ENMSEW2010, RHD4CZ6C062RW3000, RHD4CZ6A015RW1000, RHD4ENSDZ6APPEW100 SS | 91% | -184d |
| RHD4CZ6C052RW2000 |  | Backfill Layers works Using Dynamic Compaction Crane (RIC) for Road (RD-C-5 /2) - (B1.31 23 23.03)-Z6-C052-RW | 2d | 2026-03-18 A | 2026-08-22 A | RHD4CZ6C052RW1000 | 100% |  |
| RHD4CZ6C052RW3000 |  | Backfill Layers works using Improved fill Material for Road (RD-C-5 /2) - (B1.31 23 23.01)-Z6-C052-RW | 9d | 2026-12-27 | 2027-01-05 | RHD4CZ6C052RW2000 |  | -184d |
|  | 279 | **RHD4-02-002-Road Works - RW-Z6-(RD-A-2)** |  | 2026-02-25 | 2026-04-01 |  |  |  |
| RHD4CZ6A02RW1000 |  | Excavation works for Road (RD-A-2) - (B1.31 23 16.01)-Z6-A02-RW | 7d | 2026-02-25 A | 2026-04-01 A | RHD4ENMSEW2000, RHD4ENMSEW2010, RHD4CZ6C052RW3000, RHD4ENSDZ6APPEW100 SS | 100% |  |
|  | 264 | **RHD4-02-002-Z4-Road Works** |  | 2026-01-08 | 2027-08-26 |  |  |  |
|  | 294 | **RHD4-02-002-Road Works - RW-Z4-(RD-L-1)** |  | 2026-01-08 | 2027-07-10 |  |  |  |
| RHD4CZ4L01RW1000 |  | Excavation works for Road (RD-L-1) - (B1.31 23 16.01)-Z4-L01-RW | 13d | 2026-01-08 A | 2026-07-29 A | RHD4ENMSEW2000, RHD4ENMSEW2010, RHD4ENSDZ8APPEW100 SS | 100% |  |
| RHD4CZ4L01RW2000 |  | Backfill Layers works Using Dynamic Compaction Crane (RIC) for Road (RD-L-1) - (B1.31 23 23.03)-Z4-L01-RW | 7d | 2026-01-15 A | 2026-08-27 A | RHD4CZ4L01RW1000 SS, RHD4CZ4L01RW1000 FF | 100% |  |
| RHD4CZ4L01RW3000 |  | Backfill Layers works using Improved fill Material for Road (RD-L-1) - (B1.31 23 23.01)-Z4-L01-RW | 2d | 2027-07-08 | 2027-07-10 | RHD4CZ4L01RW1000, RHD4CZ4L01RW2000, RHD4CZ3C011RW3003 |  | -155d |
|  | 265 | **RHD4-02-002-Road Works - RW-Z4-(RD-A-1 /3)** |  | 2026-01-24 | 2027-08-02 |  |  |  |
| RHD4CZ4A013RW1000 |  | Excavation works for Road (RD-A-1 /3) - Stage 1 - (B1.31 23 16.01)-Z4-A013-RW | 11d | 2026-01-24 A | 2026-07-07 A | RHD4ENMSEW2000, RHD4ENMSEW2010, RHD4ENSDZ4APPEW100 SS, RHD4CZ4L01RW2000 | 100% |  |
| RHD4CZ4A013RW1001 |  | Excavation works for Road (RD-A-1 /3) - Stage 2 - (B1.31 23 16.01)-Z4-A013-RW | 15d | 2026-02-05 A | 2026-08-26 A | RHD4ENMSEW2000, RHD4ENMSEW2010, RHD4CZ4A013RW1000 | 100% |  |
| RHD4CZ4A013RW2000 |  | Backfill Layers works Using Dynamic Compaction Crane (RIC) for Road (RD-A-1 /3) - (B1.31 23 23.03)-Z4-A013-RW | 15d | 2026-02-24 A | 2026-08-22 A | RHD4CZ4A013RW1001 | 100% |  |

| ID | WBS | Task | Duration | Start | Finish | Predecessors | Complete | Total float |
| --- | --- | --- | --- | --- | --- | --- | --- | --- |
| RHD4CZ4A013RW3000 |  | Backfill Layers works using Improved fill Material for Road (RD-A-1 /3) - Stage 1 - (B1.31 23 23.01)-Z4-A013-RW | 5d | 2027-07-11 | 2027-07-15 | RHD4CZ4A013RW2000, RHD4CZ4L01RW3000 |  | -155d |
| RHD4CZ4A013RW3001 |  | Backfill Layers works using Improved fill Material for Road (RD-A-1 /3) - Stage 2 - (B1.31 23 23.01)-Z4-A013-RW | 5d | 2027-07-17 | 2027-07-21 | RHD4CZ4A013RW3000 |  | -155d |
| RHD4CZ4A013RW3002 |  | Backfill Layers works using Improved fill Material for Road (RD-A-1 /3) - Stage 3 - (B1.31 23 23.01)-Z4-A013-RW | 5d | 2027-07-22 | 2027-07-27 | RHD4CZ4A013RW3001 |  | -155d |
| RHD4CZ4A013RW3003 |  | Backfill Layers works using Improved fill Material for Road (RD-A-1 /3) - Stage 4 - (B1.31 23 23.01)-Z4-A013-RW | 5d | 2027-07-28 | 2027-08-02 | RHD4CZ4A013RW3002 |  | -155d |
|  | 267 | **RHD4-02-002-Road Works - RW-Z4-(RD-C-3/1)** |  | 2026-03-14 | 2027-08-24 |  |  |  |
| RHD4CZ4C031RW1000 |  | Excavation works for Road (RD-C-3/1) - (B1.31 23 16.01)-Z4-C031-RW | 4d | 2026-03-14 A | 2026-05-10 A | RHD4ENMSEW2000, RHD4ENMSEW2010, RHD4ENSDZ4APPEW100 SS, RHD4CZ4A013RW2000 | 100% |  |
| RHD4CZ4C031RW2000 |  | Backfill Layers works Using Dynamic Compaction Crane (RIC) for Road (RD-C-3/1) - (B1.31 23 23.03)-Z4-C031-RW | 13d | 2026-03-26 A | 2026-05-25 A | RHD4CZ4C031RW1000, RHD4CZ4RA02RA2000 | 100% |  |
| RHD4CZ4C031RW3000 |  | Backfill Layers works using Improved fill Material for Road (RD-C-3/1) - (B1.31 23 23.01)-Z4-C031-RW | 19d | 2027-08-03 | 2027-08-24 | RHD4CZ4C031RW2000, RHD4CZ4A013RW3003 |  | -155d |
|  | 268 | **RHD4-02-002-Road Works - RW-Z4-(RD-L-14)** |  | 2026-04-13 | 2027-08-17 |  |  |  |
| RHD4CZ4L014RW1000 |  | Excavation works for Road (RD-L-14) - (B1.31 23 16.01)-Z4-L014-RW | 11d | 2026-04-13 A | 2026-05-27 A | RHD4ENMSEW2000, RHD4ENMSEW2010, RHD4ENSDZ4APPEW100 SS, RHD4CZ4C031RW2000 | 100% |  |
| RHD4CZ4L014RW2000 |  | Backfill Layers works Using Dynamic Compaction Crane (RIC) for Road (RD-L-14) - (B1.31 23 23.03)-Z4-L014-RW | 14.84d | 2026-04-19 A | 2026-09-20 A | RHD4CZ4L014RW1000 SS | 100% |  |
| RHD4CZ4L014RW3000 |  | Backfill Layers works using Improved fill Material for Road (RD-L-14) - (B1.31 23 23.01)-Z4-L014-RW | 13d | 2027-08-03 | 2027-08-17 | RHD4CZ4L014RW2000, RHD4CZ4A013RW3003 |  | -154d |
|  | 269 | **RHD4-02-002-Road Works - RW-Z4-(RD-L-9)** |  | 2026-04-27 | 2027-08-24 |  |  |  |
| RHD4CZ4L09RW1000 |  | Excavation works for Road (RD-L-9) - Stage 1 - (B1.31 23 16.01)-Z4-L09-RW | 11d | 2026-04-27 A | 2026-09-09 A | RHD4ENMSEW2000, RHD4ENMSEW2010, RHD4ENSDZ4APPEW100 SS, RHD4CZ4L014RW2000 | 100% |  |
| RHD4CZ4L09RW1001 |  | Excavation works for Road (RD-L-9) - Stage 2 - (B1.31 23 16.01)-Z4-L09-RW | 5d | 2026-05-10 A | 2026-09-09 A | RHD4CZ4L09RW1000, RHD4ENMSEW2000, RHD4ENMSEW2010 | 100% |  |
| RHD4CZ4L09RW1002 |  | Excavation works for Road (RD-L-9) - Stage 3 - (B1.31 23 16.01)-Z4-L09-RW | 11d | 2026-09-05 A | 2026-10-20 A | RHD4CZ4L09RW1001, RHD4ENMSEW2000, RHD4ENMSEW2010 | 100% |  |
| RHD4CZ4L09RW1003 |  | Excavation works for Road (RD-L-9) - Stage 4 - (B1.31 23 16.01)-Z4-L09-RW | 11d | 2026-09-05 A | 2026-10-21 A | RHD4CZ4L09RW1002, RHD4ENMSEW2000, RHD4ENMSEW2010 | 100% |  |
| RHD4CZ4L09RW2000 |  | Backfill Layers works Using Dynamic Compaction Crane (RIC) for Road (RD-L-9) - (B1.31 23 23.03)-Z4-L09-RW | 2d | 2026-10-20 A | 2026-11-11 | RHD4CZ4L09RW1003 | 50% | -147d |
| RHD4CZ4L09RW4000 |  | Soil improvement works by Dynamic Compaction (DC) for Road (RD-L-9) - (B1.31 23 23.23.01)-Z4-L09-RW | 14d | 2026-10-20 A | 2026-11-15 | RHD4CZ4L09RW2000 | 80% | -116d |
| RHD4CZ4L09RW3000 |  | Backfill Layers works using Improved fill Material for Road (RD-L-9) - Stage 1 - (B1.31 23 23.01)-Z4-L09-RW | 2d | 2027-08-18 | 2027-08-19 | RHD4CZ4L09RW2000, RHD4CZ4L014RW3000 |  | -154d |
| RHD4CZ4L09RW3001 |  | Backfill Layers works using Improved fill Material for Road (RD-L-9) - Stage 2 - (B1.31 23 23.01)-Z4-L09-RW | 2d | 2027-08-21 | 2027-08-22 | RHD4CZ4L09RW3000 |  | -154d |
| RHD4CZ4L09RW3002 |  | Backfill Layers works using Improved fill Material for Road (RD-L-9) - Stage 3 - (B1.31 23 23.01)-Z4-L09-RW | 2d | 2027-08-23 | 2027-08-24 | RHD4CZ4L09RW3001 |  | -154d |
|  | 266 | **RHD4-02-002-Road Works - RW-Z4-(RD-C-1 /2)** |  | 2026-09-01 | 2027-08-26 |  |  |  |
| RHD4CZ4C012RW1000 |  | Excavation works for Road (RD-C-1 /2) - (B1.31 23 16.01)-Z4-C012-RW | 2d | 2026-09-01 A | 2026-11-14 | RHD4ENSDZ4APPEW100, RHD4ENMSEW2000, RHD4ENMSEW2010, RHD4CZ4L09RW2000 | 50% | -147d |
| RHD4CZ4C012RW2000 |  | Backfill Layers works Using Dynamic Compaction Crane (RIC) for Road (RD-C-1 /2) - (B1.31 23 23.03)-Z4-C012-RW | 3d | 2026-09-10 A | 2026-11-17 | RHD4CZ4C012RW1000 | 50% | -147d |
| RHD4CZ4C012RW3000 |  | Backfill Layers works using Improved fill Material for Road (RD-C-1 /2) - (B1.31 23 23.01)-Z4-C012-RW | 2d | 2027-08-25 | 2027-08-26 | RHD4CZ4C012RW2000, RHD4CZ4L09RW3002 |  | -154d |
|  | 290 | **RHD4-02-002-Z8-Road Works** |  | 2026-01-08 | 2027-06-23 |  |  |  |
|  | 291 | **RHD4-02-002-Road Works - RW-Z8-(RD-A-1 /1)** |  | 2026-01-08 | 2026-11-15 |  |  |  |
| RHD4CZ8A011RW1000 |  | Excavation works for Road (RD-A-1 /1) - (B1.31 23 16.01)-Z8-A011-RW | 9d | 2026-01-08 A | 2026-07-13 A | RHD4ENMSEW2000, RHD4ENMSEW2010, RHD4ENSDZ8APPEW100 SS | 100% |  |
| RHD4CZ8A011RW2000 |  | Backfill Layers works Using Dynamic Compaction Crane (RIC) for Road (RD-A-1 /1) - (B1.31 23 23.03)-Z8-A011-RW | 9d | 2026-07-04 A | 2026-08-27 A | RHD4CZ8A011RW1000 | 100% |  |
| RHD4CZ8A011RW3000 |  | Backfill Layers works using Improved fill Material for Road (RD-A-1 /1) - (B1.31 23 23.01)-Z8-A011-RW | 5d | 2026-11-10 | 2026-11-15 | RHD4CZ8A011RW2000 |  | -164.02d |
|  | 293 | **RHD4-02-002-Road Works - RW-Z8-(RD-C-7/2)** |  |  |  |  |  |  |
|  | 295 | **RHD4-02-002-Road Works - RW-Z8-(RD-L-4)** |  | 2026-07-22 | 2026-11-11 |  |  |  |
| RHD4CZ8L04RW1000 |  | Excavation works for Road (RD-L-4) - (B1.31 23 16.01)-Z8-L04-RW | 7d | 2026-07-22 A | 2026-08-03 A | RHD4ENSDZ8APPEW100, RHD4ENMSEW2000, RHD4ENMSEW2010 | 100% |  |
| RHD4CZ8L04RW2000 |  | Backfill Layers works Using Dynamic Compaction Crane (RIC) for Road (RD-L-4) - (B1.31 23 23.03)-Z8-L04-RW | 3d | 2026-08-01 A | 2026-08-07 A | RHD4CZ8L04RW1000 | 100% |  |
| RHD4CZ8L04RW3000 |  | Backfill Layers works using Improved fill Material for Road (RD-L-4) - (B1.31 23 23.01)-Z8-L04-RW | 2d | 2026-11-10 | 2026-11-11 | RHD4CZ8L04RW2000 |  | -160d |
|  | 292 | **RHD4-02-002-Road Works - RW-Z8-(RD-C-1/4)** |  | 2027-06-12 | 2027-06-23 |  |  |  |
| RHD4CZ8C014RW1000 |  | Excavation works for Road (RD-C-1/4) - (B1.31 23 16.01)-Z8-C014-RW | 4d | 2027-06-12 | 2027-06-16 | RHD4ENSDZ8APPEW100, RHD4ENMSEW2000, RHD4ENMSEW2010, RHD4CZ8L04ST6100 |  | -143.02d |
| RHD4CZ8C014RW2000 |  | Backfill Layers works Using Dynamic Compaction Crane (RIC) for Road (RD-C-1/4) - (B1.31 23 23.03)-Z8-C014-RW | 4d | 2027-06-16 | 2027-06-21 | RHD4ENSDZ8SUBEW100, RHD4CZ8C014RW1000 |  | -143.02d |
| RHD4CZ8C014RW3000 |  | Backfill Layers works using Improved fill Material for Road (RD-C-1/4) - (B1.31 23 23.01)-Z8-C014-RW | 2d | 2027-06-21 | 2027-06-23 | RHD4CZ8C014RW2000 |  | -143.02d |
|  | 282 | **RHD4-02-002-Z7-Road Works** |  | 2025-12-24 | 2027-02-11 |  |  |  |
|  | 286 | **RHD4-02-002-Road Works - RW-Z7-(RD-C-3/2)** |  | 2025-12-24 | 2026-11-14 |  |  |  |
| RHD4CZ7C032RW1000 |  | Excavation works for Road (RD-C-3/2) - Stage 1 - (B1.31 23 16.01)-Z7-C032-RW | 6d | 2025-12-24 A | 2026-05-05 A | RHD4ENMSEW2000, RHD4ENMSEW2010, RHD4ENSDZ7APPEW100 SS | 100% |  |
| RHD4CZ7C032RW1001 |  | Excavation works for Road (RD-C-3/2) - Stage 2 - (B1.31 23 16.01)-Z7-C032-RW | 17d | 2025-12-31 A | 2026-05-25 A | RHD4ENMSEW2000, RHD4ENMSEW2010, RHD4CZ7C032RW1000 | 100% |  |
| RHD4CZ7C032RW1002 |  | Excavation works for Road (RD-C-3/2) - Stage 3 - (B1.31 23 16.01)-Z7-C032-RW | 13d | 2026-01-20 A | 2026-07-14 A | RHD4ENMSEW2000, RHD4ENMSEW2010, RHD4CZ7C032RW1001 | 100% |  |
| RHD4CZ7C032RW1003 |  | Excavation works for Road (RD-C-3/2) - Stage 4 - (B1.31 23 16.01)-Z7-C032-RW(Completed) | 17d | 2026-02-04 A | 2026-08-03 A | RHD4ENMSEW2000, RHD4ENMSEW2010, RHD4CZ7C032RW1002 | 100% |  |
| RHD4CZ7C032RW2000 |  | Backfill Layers works Using Dynamic Compaction Crane (RIC) for Road (RD-C-3/2) - (B1.31 23 23.03)-Z7-C032-RW | 2d | 2026-11-10 | 2026-11-11 | RHD4ENMSEW2000, RHD4ENMSEW2010, RHD4CZ7C032RW1002, RHD4CZ7C032RW1003 |  | -158.02d |
| RHD4CZ7C032RW3000 |  | Backfill Layers works using Improved fill Material for Road (RD-C-3/2) - (B1.31 23 23.01)-Z7-C032-RW | 2d | 2026-11-12 | 2026-11-14 | RHD4CZ7C032RW2000 |  | -158.02d |
|  | 289 | **RHD4-02-002-Road Works - RW-Z7-(RD-L-3)** |  | 2026-04-05 | 2026-11-28 |  |  |  |
| RHD4CZ7L03RW1000 |  | Excavation works for Road (RD-L-3) - (B1.31 23 16.01)-Z7-L03-RW | 45d | 2026-04-05 A | 2026-05-27 A | RHD4ENMSEW2000, RHD4ENMSEW2010, RHD4ENSDZ7APPEW100 SS, RHD4CZ7C032RW1000 | 100% |  |
| RHD4CZ7L03RW2000 |  | Backfill Layers works Using Dynamic Compaction Crane (RIC) for Road (RD-L-3) - (B1.31 23 23.03)-Z7-L03-RW | 14d | 2026-04-08 A | 2026-05-20 A | RHD4CZ7L03RW1000 | 100% |  |
| RHD4CZ7L03RW3000 |  | Backfill Layers works using Improved fill Material for Road (RD-L-3) - (B1.31 23 23.01)-Z7-L03-RW | 16d | 2026-11-10 | 2026-11-28 | RHD4CZ7L03RW2000 |  | -169d |
|  | 287 | **RHD4-02-002-Road Works - RW-Z7-(RD-L-13/1)** |  | 2025-12-31 | 2026-11-29 |  |  |  |
| RHD4CZ7L131RW1000 |  | Excavation works for Road (RD-L-13/1) - (B1.31 23 16.01)-Z7-L131-RW | 17d | 2025-12-31 A | 2026-06-01 A | RHD4ENMSEW2000, RHD4ENMSEW2010, RHD4ENSDZ7APPEW100 SS, RHD4CZ7L03RW1000 SS | 100% |  |
| RHD4CZ7L131RW2000 |  | Backfill Layers works Using Dynamic Compaction Crane (RIC) for Road (RD-L-13/1) - (B1.31 23 23.03)-Z7-L131-RW | 3d | 2025-12-31 A | 2026-08-22 A | RHD4CZ7L131RW1000 SS | 100% |  |
| RHD4CZ7L131RW3000 |  | Backfill Layers works using Improved fill Material for Road (RD-L-13/1) - (B1.31 23 23.01)-Z7-L131-RW | 17d | 2026-11-10 | 2026-11-29 | RHD4CZ7L131RW2000 |  | -166d |
|  | 284 | **RHD4-02-002-Road Works - RW-Z7-(RD-C-1/3)** |  | 2026-09-17 | 2027-02-11 |  |  |  |
| RHD4CZ7C013RW1000 |  | Excavation works for Road (RD-C-1/3) - (B1.31 23 16.01)-Z7-C013-RW | 2d | 2026-09-17 A | 2026-09-19 A | RHD4ENMSEW2000, RHD4ENMSEW2010, RHD4CZ7A012ST1106 | 100% |  |
| RHD4CZ7C013RW2000 |  | Backfill Layers works Using Dynamic Compaction Crane (RIC) for Road (RD-C-1/3) - (B1.31 23 23.03)-Z7-C013-RW | 3d | 2026-09-20 A | 2026-09-22 A | RHD4CZ7C013RW1000 | 100% |  |
| RHD4CZ7C013RW3000 |  | Backfill Layers works using Improved fill Material for Road (RD-C-1/3) - (B1.31 23 23.01)-Z7-C013-RW | 2d | 2027-02-09 | 2027-02-11 | RHD4CZ7C013RW2000, RHD4CZ7L03RW3000 |  | -174.02d |
|  | 288 | **RHD4-02-002-Road Works - RW-Z7-(RD-L-15)** |  | 2026-04-18 | 2026-11-19 |  |  |  |
| RHD4CZ7L015RW1000 |  | Excavation works for Road (RD-L-15) - (B1.31 23 16.01)-Z7-L015-RW | 29d | 2026-04-18 A | 2026-05-27 A | RHD4ENMSEW2000, RHD4ENMSEW2010, RHD4ENSDZ7APPEW100 SS, RHD4CZ7L131RW1000 SS | 100% |  |
| RHD4CZ7L015RW2000 |  | Backfill Layers works Using Dynamic Compaction Crane (RIC) for Road (RD-L-15) - (B1.31 23 23.03)-Z7-L015-RW | 45d | 2026-05-31 A | 2026-06-22 A | RHD4CZ7L131RW2000, RHD4CZ7L015RW1000 SS | 100% |  |
| RHD4CZ7L015RW3000 |  | Backfill Layers works using Improved fill Material for Road (RD-L-15) - (B1.31 23 23.01)-Z7-L015-RW | 9d | 2026-11-10 | 2026-11-19 | RHD4CZ7L015RW2000, RHD4CZ7L131RW3000 SS |  | -166d |
|  | 283 | **RHD4-02-002-Road Works - RW-Z7-(RD-A-1 /2)** |  | 2026-03-07 | 2026-11-24 |  |  |  |
| RHD4CZ7A012RW2000 |  | Backfill Layers works Using Dynamic Compaction Crane (RIC) for Road (RD-A-1 /2) - (B1.31 23 23.03)-Z7-A012-RW | 10d | 2026-03-07 A | 2026-06-22 A | RHD4CZ7L131RW2000, RHD4CZ7A012RW1000, RHD4CZ7L131RW3000 SS | 100% |  |
| RHD4CZ7A012RW1000 |  | Excavation works for Road (RD-A-1 /2) - (B1.31 23 16.01)-Z7-A012-RW | 26d | 2026-05-30 A | 2026-06-27 A | RHD4ENMSEW2000, RHD4ENMSEW2010, RHD4ENSDZ7APPEW100 SS, RHD4CZ7L131RW1000 SS, RHD4CZ7L015RW1000 | 100% |  |
| RHD4CZ7A012RW3000 |  | Backfill Layers works using Improved fill Material for Road (RD-A-1 /2) - (B1.31 23 23.01)-Z7-A012-RW | 13d | 2026-11-10 | 2026-11-24 | RHD4CZ7A012RW2000, RHD4CZ7L015RW3000 SS |  | -166d |
|  | 285 | **RHD4-02-002-Road Works - RW-Z7-(RD-C-2)** |  | 2026-08-09 | 2027-01-12 |  |  |  |
| RHD4CZ7C02RW1000 |  | Excavation works for Road (RD-C-2) - (B1.31 23 16.01)-Z7-C02-RW(Completed) | 8d | 2026-08-09 A | 2026-08-30 A | RHD4ENMSEW2000, RHD4ENMSEW2010, RHD4ENSDZ7APPEW100 SS, RHD4CZ6A02RW1000 SS | 100% |  |

| ID | WBS | Task | Duration | Start | Finish | Predecessors | Complete | Total float |
| --- | --- | --- | --- | --- | --- | --- | --- | --- |
| RHD4CZ7C02RW2000 |  | Backfill Layers works Using Dynamic Compaction Crane (RIC) for Road (RD-C-2) - (B1.31 23 23.03)-Z7-C02-RW | 4d | 2026-08-30 A | 2027-01-10 | RHD4ENMSEW2000, RHD4ENMSEW2010, RHD4ENSDZ7APPEW100 SS, RHD4CZ6A02RW1000 SS, RHD4CZ7C02RW1000 | 88% | -184d |
| RHD4CZ7C02RW3000 |  | Backfill Layers works using Improved fill Material for Road (RD-C-2) - (B1.31 23 23.01)-Z7-C02-RW | 2d | 2027-01-11 | 2027-01-12 | RHD4CZ7C02RW2000 |  | -184d |
|  | 296 | **RHD4-02-002-Z9-Road Works** |  | 2025-12-24 | 2026-11-22 |  |  |  |
|  | 297 | **RHD4-02-002-Road Works - RW-Z9-(RD-C-7/1)** |  | 2026-06-30 | 2026-11-22 |  |  |  |
| RHD4CZ9C071RW1000 |  | Excavation works for Road (RD-C-7/1) - (B1.31 23 16.01)-Z9-C071-RW | 11d | 2026-06-30 A | 2026-09-01 A | RHD4CZ5A014RW1001, RHD4ENMSEW2000, RHD4ENMSEW2010, RHD4ENSDZ9APPEW100 SS | 100% |  |
| RHD4CZ9C071RW2000 |  | Backfill Layers works Using Dynamic Compaction Crane (RIC) for Road (RD-C-7/1) - (B1.31 23 23.03)-Z9-C071-RW | 3d | 2026-07-14 A | 2026-08-27 A | RHD4CZ5A014RW2001, RHD4CZ9C071RW1000 SS | 100% |  |
| RHD4CZ9C071RW3000 |  | Backfill Layers works using Improved fill Material for Road (RD-C-7/1) - (B1.31 23 23.01)-Z9-C071-RW | 11d | 2026-11-10 | 2026-11-22 | RHD4CZ9C071RW2000 |  | -165.02d |
|  | 299 | **RHD4-02-002-Road Works - RW-Z9-(RD-L-5)** |  | 2025-12-24 | 2026-11-11 |  |  |  |
| RHD4CZ9L05RW1000 |  | Excavation works for Road (RD-L-5) - (B1.31 23 16.01)-Z9-L05-RW | 2d | 2025-12-24 A | 2026-07-14 A | RHD4ENMSEW2000, RHD4ENMSEW2010 | 100% |  |
| RHD4CZ9L05RW2000 |  | Backfill Layers works Using Dynamic Compaction Crane (RIC) for Road (RD-L-5) - (B1.31 23 23.03)-Z9-L05-RW | 2d | 2026-01-15 A | 2026-08-29 A | RHD4CZ5A014RW2000, RHD4CZ9L05RW1000 | 100% |  |
| RHD4CZ9L05RW3000 |  | Backfill Layers works using Improved fill Material for Road (RD-L-5) - (B1.31 23 23.01)-Z9-L05-RW | 2d | 2026-11-10 | 2026-11-11 | RHD4CZ9L05RW2000 |  | -164d |
|  | 300 | **RHD4-02-002-Road Works - RW-Z9-(RD-L-6)** |  | 2025-12-24 | 2026-11-16 |  |  |  |
| RHD4CZ9L06RW1000 |  | Excavation works for Road (RD-L-6) - (B1.31 23 16.01)-Z9-L06-RW(Completed) | 22d | 2025-12-24 A | 2026-08-03 A | RHD4ENMSEW2000, RHD4ENMSEW2010, RHD4ENSDZ9APPEW100 SS, RHD4CZ9L05RW1000 FF | 100% |  |
| RHD4CZ9L06RW2000 |  | Backfill Layers works Using Dynamic Compaction Crane (RIC) for Road (RD-L-6) - (B1.31 23 23.03)-Z9-L06-RW | 6d | 2026-08-08 A | 2026-11-11 | RHD4CZ9L05RW2000, RHD4ENMSEW2000, RHD4ENMSEW2010, RHD4ENSDZ9APPEW100 SS, RHD4CZ9L05RW1000, RHD4CZ9L06RW1000 | 82% | -164d |
| RHD4CZ9L06RW3000 |  | Backfill Layers works using Improved fill Material for Road (RD-L-6) - (B1.31 23 23.01)-Z9-L06-RW | 4d | 2026-11-12 | 2026-11-16 | RHD4CZ9L06RW2000, RHD4CZ9L05RW3000 |  | -164d |
|  | 298 | **RHD4-02-002-Road Works - RW-Z9-(RD-L-2)** |  | 2026-02-04 | 2026-11-18 |  |  |  |
| RHD4CZ9L02RW2000 |  | Backfill Layers works Using Dynamic Compaction Crane (RIC) for Road (RD-L-2) - (B1.31 23 23.03)-Z9-L02-RW | 5d | 2026-02-04 A | 2026-11-11 | RHD4CZ9L02RW1000 SS, RHD4CZ9C071RW2000 SS | 65% | -161.78d |
| RHD4CZ9L02RW1000 |  | Excavation works for Road (RD-L-2) - (B1.31 23 16.01)-Z9-L02-RW | 10d | 2026-06-30 A | 2026-08-22 A | RHD4CZ5A014RW1001, RHD4ENMSEW2000, RHD4ENMSEW2010, RHD4ENSDZ9APPEW100 SS | 100% |  |
| RHD4CZ9L02RW3000 |  | Backfill Layers works using Improved fill Material for Road (RD-L-2) - (B1.31 23 23.01)-Z9-L02-RW | 6d | 2026-11-11 | 2026-11-18 | RHD4CZ9L02RW2000 |  | -161.78d |
|  | 260 | **RHD4-02-002-Z3-Road Works** |  | 2026-03-25 | 2027-07-07 |  |  |  |
|  | 261 | **RHD4-02-002-Road Works - RW-Z3-(RD-C-1 /1)** |  | 2026-03-25 | 2027-07-07 |  |  |  |
| RHD4CZ3C011RW1000 |  | Excavation works for Road (RD-C-1 /1) - Stage 1 - (B1.31 23 16.01)-Z3-C011-RW | 11d | 2026-03-25 A | 2026-08-06 A | RHD4ENMSEW2000, RHD4ENMSEW2010, RHD4CZ2L011RW1000 | 100% |  |
| RHD4CZ3C011RW1001 |  | Excavation works for Road (RD-C-1 /1) - Stage 2 - (B1.31 23 16.01)-Z3-C011-RW | 3d | 2026-04-07 A | 2026-08-06 A | RHD4ENMSEW2000, RHD4ENMSEW2010, RHD4CZ3C011RW1000 | 100% |  |
| RHD4CZ3C011RW1002 |  | Excavation works for Road (RD-C-1 /1) - Stage 3 - (B1.31 23 16.01)-Z3-C011-RW | 5d | 2026-04-11 A | 2026-08-12 A | RHD4ENMSEW2000, RHD4ENMSEW2010, RHD4CZ3C011RW1001 | 100% |  |
| RHD4CZ3C011RW2000 |  | Backfill Layers works Using Dynamic Compaction Crane (RIC) for Road (RD-C-1 /1) - (B1.31 23 23.03)-Z3-C011-RW | 6d | 2026-08-05 A | 2026-08-22 A | RHD4CZ3C011RW1003 | 100% |  |
| RHD4CZ3C011RW1003 |  | Excavation works for Road (RD-C-1 /1) - Stage 4 - (B1.31 23 16.01)-Z3-C011-RW | 11d | 2026-09-01 A | 2026-09-13 A | RHD4ENMSEW2000, RHD4ENMSEW2010, RHD4CZ3C011RW1002 | 100% |  |
| RHD4CZ3C011RW3000 |  | Backfill Layers works using Improved fill Material for Road (RD-C-1 /1) - Stage 1 - (B1.31 23 23.01)-Z3-C011-RW | 2d | 2027-06-29 | 2027-06-30 | RHD4CZ3C011RW2000, RHD4CZ2C082RW3000 |  | -155d |
| RHD4CZ3C011RW3001 |  | Backfill Layers works using Improved fill Material for Road (RD-C-1 /1) - Stage 2 - (B1.31 23 23.01)-Z3-C011-RW | 2d | 2027-07-01 | 2027-07-03 | RHD4CZ3C011RW3000 |  | -155d |
| RHD4CZ3C011RW3002 |  | Backfill Layers works using Improved fill Material for Road (RD-C-1 /1) - Stage 3 - (B1.31 23 23.01)-Z3-C011-RW | 2d | 2027-07-04 | 2027-07-05 | RHD4CZ3C011RW3001 |  | -155d |
| RHD4CZ3C011RW3003 |  | Backfill Layers works using Improved fill Material for Road (RD-C-1 /1) - Stage 4 - (B1.31 23 23.01)-Z3-C011-RW | 2d | 2027-07-06 | 2027-07-07 | RHD4CZ3C011RW3002 |  | -155d |
|  | 263 | **RHD4-02-002-Road Works - RW-Z3-(RD-L-12/2)** |  | 2026-06-16 | 2027-07-03 |  |  |  |
| RHD4CZ3L122RW2000 |  | Backfill Layers works Using Dynamic Compaction Crane (RIC) for Road (RD-L-12/2) - (B1.31 23 23.03)-Z3-L122-RW | 25d | 2026-06-16 A | 2026-07-05 A | RHD4PRSHLDOSST1003 SS, RHD4PRSHLDOSST1007 SS, RHD4CZ3L122RW1000 | 100% |  |
| RHD4CZ3L122RW1000 |  | Excavation works for Road (RD-L-12/2) - (B1.31 23 16.01)-Z3-L122-RW | 13d | 2026-06-30 A | 2026-07-08 A | RHD4ENMSEW2000, RHD4ENMSEW2010, RHD4ENSDZ3APPEW100 SS, RHD4PRSHLDOSSW1007 | 100% |  |
| RHD4CZ3L122RW3000 |  | Backfill Layers works using Improved fill Material for Road (RD-L-12/2) - Stage 1 - (B1.31 23 23.01)-Z3-L122-RW | 2d | 2027-06-27 | 2027-06-28 | RHD4CZ3L122RW2000, RHD4CZ5C051ST1501, RHD4CZ5L016ST1509, RHD4CZ5L016ST1503, RHD4CZ5L016ST3501, RHD4CZ5L016ST1502, RHD4CZ5L016ST1500, RHD4CZ5C061ST3501, RHD4CZ7RA03RA3000, RHD4CZ9L06RW3000, RHD4CZ7C032RW3000, RHD4CZ8L04RW3000, RHD4CZ2L011RW3000 |  | -149d |
| RHD4CZ3L122RW3001 |  | Backfill Layers works using Improved fill Material for Road (RD-L-12/2) - Stage 2 - (B1.31 23 23.01)-Z3-L122-RW | 2d | 2027-06-29 | 2027-06-30 | RHD4CZ3L122RW3000, RHD4CZ1C081ST1504 |  | -149d |
| RHD4CZ3L122RW3002 |  | Backfill Layers works using Improved fill Material for Road (RD-L-12/2) - Stage 3 - (B1.31 23 23.01)-Z3-L122-RW | 2d | 2027-07-01 | 2027-07-03 | RHD4CZ3L122RW3001, RHD4CZ5L07ST3502, RHD4CZ5A014ST3500, RHD4CZ5A014ST3400, RHD4CZ5A014ST3501, RHD4CZ5C061ST2500, RHD4CZ5C051SW3501, RHD4CZ5C051ST8500 |  | -149d |
|  | 262 | **RHD4-02-002-Road Works - RW-Z3-(RD-C-8 /3)** |  | 2027-01-17 | 2027-07-03 |  |  |  |
| RHD4CZ3C083RW1000 |  | Excavation works for Road (RD-C-8 /3) - (B1.31 23 16.01)-Z3-C083-RW | 21d | 2027-01-17 | 2027-02-09 | RHD4ENSDZ3APPEW100, RHD4ENMSEW2000, RHD4ENMSEW2010, RHD4CZ3L122RW1000, RHD4CZ3L122ST1501, RHD4CZ3C011RW1002 |  | -140d |
| RHD4CZ3C083RW2000 |  | Backfill Layers works Using Dynamic Compaction Crane (RIC) for Road (RD-C-8 /3) - (B1.31 23 23.03)-Z3-C083-RW | 2d | 2027-02-10 | 2027-02-11 | RHD4CZ3C083RW1000, RHD4CZ3L122RW2000 |  | -140d |
| RHD4CZ2C083RW3000 |  | Backfill Layers works using Improved fill Material for Road (RD-C-8 /3) - Stage 1 - (B1.31 23 23.01)-Z2-C083-RW | 2d | 2027-06-29 | 2027-06-30 | RHD4CZ3C083RW2000, RHD4CZ2C082RW3000 |  | -149d |
| RHD4CZ3C083RW3001 |  | Backfill Layers works using Improved fill Material for Road (RD-C-8 /3) - Stage 2 - (B1.31 23 23.01)-Z3-C083-RW | 2d | 2027-07-01 | 2027-07-03 | RHD4CZ2C083RW3000 |  | -149d |
|  | 255 | **RHD4-02-002-Z2-Road Works** |  | 2026-02-28 | 2028-02-10 |  |  |  |
|  | 259 | **RHD4-02-002-Road Works - RW-Z2-(RD-L-12/1)** |  |  |  |  |  |  |
|  | 257 | **RHD4-02-002-Road Works - RW-Z2-(RD-L-10/2)** |  | 2026-02-28 | 2028-02-10 |  |  |  |
| RHD4CZ2L102RW1000 |  | Excavation works for Road (RD-L-10/2) - (B1.31 23 16.01)-Z2-L102-RW(Completed) | 18d | 2026-02-28 A | 2026-08-03 A | RHD4ENMSEW2000, RHD4ENMSEW2010, RHD4ENSDZ2APPEW100 SS, RHD4PRSHLDOSSW1007 | 100% |  |
| RHD4CZ2L102RW2000 |  | Backfill Layers works Using Dynamic Compaction Crane (RIC) for Road (RD-L-10/2) - (B1.31 23 23.03)-Z2-L102-RW(Completed) | 16d | 2026-02-28 A | 2026-08-03 A | RHD4CZ2L102RW1000 SS | 100% |  |
| RHD4CZ1L102RW3000 |  | Backfill Layers works using Improved fill Material for Road (RD-L-10/2) - Stage 1 - (B1.31 23 23.01)-Z1-L102-RW | 2d | 2028-02-03 | 2028-02-06 | RHD4CZ2L102RW2000, RHD4ENMSEW2000, RHD4ENMSEW2010, RHD4ENSDZ2APPEW100 SS, RHD4CZ2L102RW1000, RHD4CZ2L102CCTV6100, RHD4CZ2L102CCTV6100 FF |  | -183.02d |
| RHD4CZ2L102RW3001 |  | Backfill Layers works using Improved fill Material for Road (RD-L-10/2) - Stage 2 - (B1.31 23 23.01)-Z2-L102-RW | 2d | 2028-02-06 | 2028-02-08 | RHD4CZ1L102RW3000 |  | -183.02d |
| RHD4CZ2L102RW3002 |  | Backfill Layers works using Improved fill Material for Road (RD-L-10/2) - Stage 3 - (B1.31 23 23.01)-Z2-L102-RW | 2d | 2028-02-08 | 2028-02-10 | RHD4CZ2L102RW3001 |  | -183.02d |
|  | 258 | **RHD4-02-002-Road Works - RW-Z2-(RD-L-11)** |  | 2026-08-04 | 2027-06-26 |  |  |  |
| RHD4CZ2L011RW1000 |  | Excavation works for Road (RD-L-11) - (B1.31 23 16.01)-Z2-L011-RW | 2d | 2026-08-04 A | 2026-08-26 A | RHD4ENMSEW2000, RHD4ENMSEW2010, RHD4CZ2L102RW2000, RHD4ENSDZ2APPEW100 SS, RHD4CZ2L102RW1000 | 100% |  |
| RHD4CZ2L011RW2000 |  | Backfill Layers works Using Dynamic Compaction Crane (RIC) for Road (RD-L-11) - (B1.31 23 23.03)-Z2-L011-RW | 2d | 2026-08-05 A | 2026-08-25 A | RHD4CZ2L011RW1000 | 100% |  |
| RHD4CZ2L011RW3000 |  | Backfill Layers works using Improved fill Material for Road (RD-L-11) - (B1.31 23 23.01)-Z2-L011-RW | 2d | 2027-06-24 | 2027-06-26 | RHD4CZ2L011RW2000, RHD4CZ2L011ICT2400 |  | -155d |
|  | 256 | **RHD4-02-002-Road Works - RW-Z2-(RD-C-8 /2)** |  | 2026-08-04 | 2027-06-28 |  |  |  |
| RHD4CZ2C082RW1000 |  | Excavation works for Road (RD-C-8 /2) - (B1.31 23 16.01)-Z2-C082-RW | 10d | 2026-08-04 A | 2026-08-19 A | RHD4ENMSEW2000, RHD4ENMSEW2010, RHD4CZ2L011RW2000 | 100% |  |
| RHD4CZ2C082RW2000 |  | Backfill Layers works Using Dynamic Compaction Crane (RIC) for Road (RD-C-8 /2) - (B1.31 23 23.03)-Z2-C082-RW | 2d | 2026-09-01 A | 2026-09-02 A | RHD4CZ2C082RW1000, RHD4CZ2L011RW2000 | 100% |  |
| RHD4CZ2C082RW3000 |  | Backfill Layers works using Improved fill Material for Road (RD-C-8 /2) - (B1.31 23 23.01)-Z2-C082-RW | 2d | 2027-06-27 | 2027-06-28 | RHD4CZ2C082RW2000, RHD4CZ2L011RW3000 |  | -155d |
|  | 252 | **RHD4-02-002-Z1-Road Works** |  | 2026-04-22 | 2028-01-29 |  |  |  |
|  | 254 | **RHD4-02-002-Road Works - RW-Z1-(RD-L-10/1)** |  | 2026-08-04 | 2028-01-29 |  |  |  |
| RHD4CZ1L101RW1000 |  | Excavation works for Road (RD-L-10/1) - (B1.31 23 16.01)-Z1-L101-RW | 8d | 2026-08-04 A | 2026-11-30 | RHD4ENMSEW2000, RHD4ENMSEW2010, RHD4CZ2L011RW1000 | 46% | -167d |
| RHD4CZ1L101RW2000 |  | Backfill Layers works Using Dynamic Compaction Crane (RIC) for Road (RD-L-10/1) - (B1.31 23 23.03)-Z1-L101-RW | 4d | 2026-08-10 A | 2026-12-01 | RHD4CZ1L101RW1000 | 66% | -167d |
| RHD4CZ1L101RW3000 |  | Backfill Layers works using Improved fill Material for Road (RD-L-10/1) - (B1.31 23 23.01)-Z1-L101-RW | 2d | 2028-01-27 | 2028-01-29 | RHD4CZ1L101CCTV6100 |  | -193d |
|  | 253 | **RHD4-02-002-Road Works - RW-Z1-(RD-C-8 /1)** |  | 2026-04-22 | 2027-11-16 |  |  |  |
| RHD4CZ1C081RW2000 |  | Backfill Layers works Using Dynamic Compaction Crane (RIC) for Road (RD-C-8 /1) - (B1.31 23 23.03)-Z1-C081-RW | 12d | 2026-04-22 A | 2026-08-13 A | RHD4CZ1C081RW1000 | 100% |  |
| RHD4CZ1C081RW1000 |  | Excavation works for Road (RD-C-8 /1) - (B1.31 23 16.01)-Z1-C081-RW | 12d | 2026-08-04 A | 2026-08-25 A | RHD4ENMSEW2000, RHD4ENMSEW2010, RHD4ENSDZ2APPEW100 SS, RHD4CZ2L102RW1000, RHD4CZ1L101RW2000 | 100% |  |
| RHD4CZ1C081RW3000 |  | Backfill Layers works using Improved fill Material for Road (RD-C-8 /1) - (B1.31 23 23.01)-Z1-C081-RW | 2d | 2027-11-15 | 2027-11-16 | RHD4CZ1C081CCTV6100 |  | -82d |
|  | 301 | **RHD4-02-002-Round About - RA** |  | 2025-12-22 | 2027-01-12 |  |  |  |
|  | 302 | **RHD4-02-002-Z3-Round Abouts** |  |  |  |  |  |  |
|  | 303 | **RHD4-02-002-Road Works - RW-Z3-(ROUND-06)** |  |  |  |  |  |  |
|  | 304 | **RHD4-02-002-Z4-Round Abouts** |  | 2026-02-05 | 2026-11-11 |  |  |  |

| ID | WBS | Task | Duration | Start | Finish | Predecessors | Complete | Total float |
| --- | --- | --- | --- | --- | --- | --- | --- | --- |
|  | 305 | **RHD4-02-002-Road Works - RW-Z4-(ROUND-02)** |  | 2026-02-05 | 2026-11-11 |  |  |  |
| RHD4CZ4RA02RA1000 |  | Excavation works for (ROUND-02) - (B1.31 23 16.01)-Z4-RA02-RA | 13d | 2026-02-05 A | 2026-06-30 A | RHD4CZ4A013RW1001 SS | 100% |  |
| RHD4CZ4RA02RA2000 |  | Backfill Layers works Using Dynamic Compaction Crane (RIC) for (ROUND-02) - (B1.31 23 23.03)-Z4-RA02-RA | 9d | 2026-03-14 A | 2026-07-11 A | RHD4CZ4RA02RA1000, RHD4CZ4A013RW2000 | 100% |  |
| RHD4CZ4RA02RA3000 |  | Backfill Layers works using Improved fill Material for (ROUND-02) - (B1.31 23 23.01)-Z4-RA02-RA | 2d | 2026-11-10 | 2026-11-11 | RHD4CZ4RA02RA2000 |  | -155d |
|  | 306 | **RHD4-02-002-Z5-Round Abouts** |  | 2026-03-01 | 2026-12-31 |  |  |  |
|  | 307 | **RHD4-02-002-Road Works - RW-Z5-(ROUND-07)** |  | 2026-03-01 | 2026-12-31 |  |  |  |
| RHD4CZ5RA07RA1000 |  | Excavation works for (ROUND-07) - (B1.31 23 16.01)-Z5-RA07-RA | 12d | 2026-03-01 A | 2026-03-18 A | RHD4CZ5A014RW1001, RHD4CZ5C061RW1000, RHD4CZ4RA02RA1000 | 100% |  |
| RHD4CZ5RA07RA2000 |  | Backfill Layers works Using Dynamic Compaction Crane (RIC) for (ROUND-07) - (B1.31 23 23.03)-Z5-RA07-RA | 2d | 2026-03-15 A | 2026-11-10 | RHD4CZ5RA07RA1000, RHD4CZ5A014RW2001, RHD4CZ5C061RW2000, RHD4CZ4RA02RA2000 SS | 81% | -158d |
| RHD4CZ5RA07RA3000 |  | Backfill Layers works using Improved fill Material for (ROUND-07) - (B1.31 23 23.01)-Z5-RA07-RA | 5d | 2026-12-27 | 2026-12-31 | RHD4CZ5RA07RA2000, RHD4CZ5A014RW3001, RHD4CZ5C061RW3000 |  | -198d |
|  | 308 | **RHD4-02-002-Z6-Round Abouts** |  | 2025-12-22 | 2026-11-16 |  |  |  |
|  | 309 | **RHD4-02-002-Road Works - RW-Z6-(ROUND-01)** |  | 2025-12-22 | 2026-11-16 |  |  |  |
| RHD4CZ6RA01RA1000 |  | Excavation works for (ROUND-01) - (B1.31 23 16.01)-Z6-RA01-RA | 13d | 2025-12-22 A | 2026-03-05 A | RHD4ENSDZ6APPEW100 SS | 100% |  |
| RHD4CZ6RA01RA2000 |  | Backfill Layers works Using Dynamic Compaction Crane (RIC) for (ROUND-01) - (B1.31 23 23.03)-Z6-RA01-RA | 2d | 2026-01-06 A | 2026-03-08 A | RHD4CZ6RA01RA1000 | 100% |  |
| RHD4CZ6RA01RA3000 |  | Backfill Layers works using Improved fill Material for (ROUND-01) - (B1.31 23 23.01)-Z6-RA01-RA | 6d | 2026-11-10 | 2026-11-16 | RHD4CZ6RA01RA2000 |  | -164d |
|  | 310 | **RHD4-02-002-Z7-Round Abouts** |  | 2026-07-01 | 2027-01-12 |  |  |  |
|  | 311 | **RHD4-02-002-Road Works - RW-Z7-(ROUND-03)** |  | 2026-07-01 | 2027-01-12 |  |  |  |
| RHD4CZ7RA03RA1000 |  | Excavation works for (ROUND-03) - (B1.31 23 16.01)-Z7-RA03-RA(Completed) | 29d | 2026-07-01 A | 2026-08-03 A | RHD4CZ7C02RW1000 SS | 100% |  |
| RHD4CZ7RA03RA2000 |  | Backfill Layers works Using Dynamic Compaction Crane (RIC) for (ROUND-03) - (B1.31 23 23.03)-Z7-RA03-RA(Completed) | 27d | 2026-07-03 A | 2026-08-03 A | RHD4CZ7RA03RA1000 SS | 100% |  |
| RHD4CZ7RA03RA3000 |  | Backfill Layers works using Improved fill Material for (ROUND-03) - (B1.31 23 23.01)-Z7-RA03-RA | 2d | 2027-01-11 | 2027-01-12 | RHD4CZ7C02RW3000 FF, RHD4CZ6RA01RA3000, RHD4CZ7C02RW2000 FF, RHD4CZ7RA03RA2000 FF, RHD4CZ7RA03RA1000 FF, RHD4ENMSEW2000 FF, RHD4ENMSEW2010 FF, RHD4ENSDZ7APPEW100 SS, RHD4CZ6A02RW1000 FF, RHD4CZ7C02RW1000 FF |  | -184d |
|  | 312 | **RHD4-02-002-Road Works - RW-Z7-(ROUND-05)** |  | 2026-08-04 | 2027-01-12 |  |  |  |
| RHD4CZ7RA05RA2000 |  | Backfill Layers works Using Dynamic Compaction Crane (RIC) for (ROUND-05) - (B1.31 23 23.03)-Z7-RA05-RA | 3d | 2026-08-04 A | 2027-01-10 | RHD4CZ7RA05RA1000 | 67% | -119d |
| RHD4CZ7RA05RA1000 |  | Excavation works for (ROUND-05) - (B1.31 23 16.01)-Z7-RA05-RA | 3d | 2027-01-06 | 2027-01-09 | RHD4CZ7RA03RA1000, RHD4ENMSEW2000, RHD4ENMSEW2010, RHD4ENSDZ7APPEW100 SS, RHD4CZ6A02RW1000 SS, RHD4CZ7C02RW1000 |  | -119d |
| RHD4CZ7RA05RA3000 |  | Backfill Layers works using Improved fill Material for (ROUND-05) - (B1.31 23 23.01)-Z7-RA05-RA | 2d | 2027-01-11 | 2027-01-12 | RHD4CZ7RA05RA2000 |  | -119d |
|  | 313 | **RHD4-02-002-Z8-Round Abouts** |  | 2026-01-08 | 2026-11-21 |  |  |  |
|  | 314 | **RHD4-02-002-Road Works - RW-Z8-(ROUND-04)** |  | 2026-01-08 | 2026-11-21 |  |  |  |
| RHD4CZ8RA04RA1000 |  | Excavation works for (ROUND-04) - (B1.31 23 16.01)-Z8-RA04-RA | 5d | 2026-01-08 A | 2026-07-13 A | RHD4CZ8A011RW1000 SS | 100% |  |
| RHD4CZ8RA04RA2000 |  | Backfill Layers works Using Dynamic Compaction Crane (RIC) for (ROUND-04) - (B1.31 23 23.03)-Z8-RA04-RA | 11d | 2026-01-19 A | 2026-07-12 A | RHD4CZ8RA04RA1000, RHD4CZ8A011RW2000 SS | 100% |  |
| RHD4CZ8RA04RA3000 |  | Backfill Layers works using Improved fill Material for (ROUND-04) - (B1.31 23 23.01)-Z8-RA04-RA | 10d | 2026-11-10 | 2026-11-21 | RHD4CZ8RA04RA2000, RHD4CZ8A011RW3000 SS |  | -164.02d |
|  | 4676 | **RHD4-02-002-Z6** |  | 2026-04-15 | 2028-02-01 |  |  |  |
|  | 5244 | **RHD4-02-002-Z6-C062** |  | 2026-05-02 | 2028-01-31 |  |  |  |
|  | 5275 | **RHD4-02-002-Z6-C062-Crossings Sewage Network - SWCr** |  |  |  |  |  |  |
|  | 5285 | **RHD4-02-002-C062-(SWCr)-MH Works - 1200 mm diameter** |  |  |  |  |  |  |
|  | 5286 | **RHD4-02-002-C062-(SWCr)-MH Works - 1200 mm diameter with Back drop** |  |  |  |  |  |  |
|  | 5281 | **RHD4-02-002-C062-(SWCr)-UPVC Pipes - 200 mm diameter** |  |  |  |  |  |  |
|  | 5319 | **RHD4-02-002-Z6-C062-Crossings Potable Network - PTCr** |  |  |  |  |  |  |
|  | 5321 | **RHD4-02-002-C062-(PTCr)-HDPE Pipes - 160 mm diameter** |  |  |  |  |  |  |
|  | 5320 | **RHD4-02-002-C062-(PTCr)-HDPE Pipes - 110 mm diameter** |  |  |  |  |  |  |
|  | 5325 | **RHD4-02-002-C062-(PTCr)-Gate Valves (Direct Buried)** |  |  |  |  |  |  |
|  | 5332 | **RHD4-02-002-C062-(PTCr)-Fire Hydrant** |  |  |  |  |  |  |
|  | 5366 | **RHD4-02-002-Z6-C062-Crossings Irrigation Network - IRRC** |  |  |  |  |  |  |
|  | 5367 | **RHD4-02-002-C062-(IRRC)-HDPE Pipes - 160 mm diameter** |  |  |  |  |  |  |
|  | 5375 | **RHD4-02-002-C062-(IRRC)-Gate Valves (Direct Buried)** |  |  |  |  |  |  |
|  | 5423 | **RHD4-02-002-Z6-C062-Road Works - RD** |  | 2026-05-02 | 2028-01-31 |  |  |  |
|  | 5424 | **RHD4-02-002-C062-(RD)-Subgrade** |  | 2026-05-02 | 2026-06-04 |  |  |  |
| RHD4CZ6C062RD1100 |  | Supply, lay and compaction subgrade compacted thickness 300 mm for Roads - (RD-C-6 /2)-Z6-C062-RD | 7d | 2026-05-02 A | 2026-06-04 A | RHD4ENSDZ6APPRD220, RHD4ENSDZ6APPEW100, RHD4CZ6C062ST3300, RHD4CZ6C062ST3302 | 100% |  |
|  | 5425 | **RHD4-02-002-C062-(RD)-Aggregate Base Course** |  | 2027-01-31 | 2027-02-04 |  |  |  |
| RHD4CZ6C062RD2100 |  | Supply, lay and compaction Aggregate base course compacted thickness 300 mmfor Roads - (RD-C-6 /2)-Z6-C062-RD | 5d | 2027-01-31 | 2027-02-04 | RHD4CZ6C062RD1100 |  | -144d |
|  | 5426 | **RHD4-02-002-C062-(RD)-Bituminous base course Two Layers, including (MC1)&(RC2)** |  | 2027-03-06 | 2028-01-12 |  |  |  |
| RHD4CZ6C062RD3100 |  | Supply, lay and Asphaltic base course including Prime Coat (MC1) for 1st Layer - (RD-C-6 /2)-Z6-C062-RD | 2d | 2027-03-06 | 2027-03-07 | RHD4CZ6C062RD2100, RHD4ENMSASPH2000, RHD4ENMSASPH2010, RHD4CZ7L03RD3100 |  | -167d |
| RHD4CZ6C062RD3200 |  | Supply, lay and Asphaltic base course including Tack Coat (RC2) for 2nd Layer - (RD-C-6 /2)-Z6-C062-RD | 2d | 2028-01-10 | 2028-01-12 | RHD4CZ6C062ICT2400 |  | -190.02d |
|  | 5428 | **RHD4-02-002-C062-(RD)-Precast Concrete Curb** |  | 2028-01-12 | 2028-01-19 |  |  |  |
| RHD4CZ6C062RD5100 |  | Supply and installation Precast Concrete Kerb for Roads - (RD-C-6 /2)-Z6-C062-RD | 6d | 2028-01-12 | 2028-01-19 | RHD4CZ6C062RD3200, RHD4ENMSRD2000, RHD4ENMSRD2010 |  | -190.02d |
|  | 5431 | **RHD4-02-002-C062-(RD)-Traffic Signage** |  | 2028-01-19 | 2028-01-27 |  |  |  |
| RHD4CZ6C062RD8100 |  | Installation of Traffic Signage for Road Network - (RD-C-6 /2)-Z6-C062-RD | 7d | 2028-01-19 | 2028-01-27 | RHD4CZ6C062RD5100 |  | -190.02d |
|  | 5429 | **RHD4-02-002-C062-(RD)-Precast Interlocking Block Pavers** |  |  |  |  |  |  |
|  | 5427 | **RHD4-02-002-C062-(RD)-Bituminous concrete wearing course including tack coat (RC2)** |  | 2028-01-19 | 2028-01-22 |  |  |  |
| RHD4CZ6C062RD4100 |  | Supply, lay and compaction Asphaltic wearing course including tack Coat (RC2)for Road Network - (RD-C-6 /2)-Z6-C062-RD | 2d | 2028-01-19 | 2028-01-22 | RHD4CZ6C062RD5100 |  | -185.02d |
|  | 5432 | **RHD4-02-002-C062-(RD)-Speed Table and Wheel Stopper** |  |  |  |  |  |  |
|  | 5430 | **RHD4-02-002-C062-(RD)-Pavement Marking** |  | 2028-01-27 | 2028-01-31 |  |  |  |
| RHD4CZ6C062RD7100 |  | Pavement Markings for Road Network - (RD-C-6 /2)-Z6-C062-RD | 3d | 2028-01-27 | 2028-01-31 | RHD4CZ6C062RD4100, RHD4CZ6C062RD8100 |  | -190.02d |
|  | 5248 | **RHD4-02-002-Z6-C062-Storm Network - ST** |  | 2026-08-04 | 2027-04-24 |  |  |  |
|  | 4132 | **RHD4-02-002-C062-(ST)-MH Works - 2000 mm diameter** |  | 2026-08-04 | 2027-02-01 |  |  |  |
| RHD4CZ6C062ST3102 |  | Excavation and PC Blinding works for MH 2000 mm - (RD-C-6 /2)-Z6-C062-ST | 2d | 2026-08-04 A | 2026-08-05 A | RHD4CZ6C062RW3000, RHD4PRSHLDOSST1000 SS | 100% |  |
| RHD4CZ6C062ST3202 |  | Installation of Base for MH 2000 mm - (RD-C-6 /2)-Z6-C062-ST | 2d | 2026-09-20 A | 2026-09-30 A | RHD4CZ6C062ST3102 | 100% |  |
| RHD4CZ6C062ST3302 |  | MH Ring and C.Slab works and Backfilling works for MH 2000 mm - (RD-C-6 /2)-Z6-C062-ST | 2d | 2027-01-26 | 2027-01-27 | RHD4CZ6C062ST3202 |  | -198d |
| RHD4CZ6C062ST3402 |  | Steel Cover for MH 2000 mm - (RD-C-6 /2)-Z6-C062-ST | 2d | 2027-01-28 | 2027-01-30 | RHD4CZ6C062ST3302 |  | -198d |
| RHD4CZ6C062ST3502 |  | Finishing, Benching, Testing works for MH 2000 mm - (RD-C-6 /2)-Z6-C062-ST | 2d | 2027-01-31 | 2027-02-01 | RHD4CZ6C062ST3402 |  | -198d |
|  | 4120 | **RHD4-02-002-C062-(ST)-GRP Pipes - 1000 mm diameter** |  | 2026-08-04 | 2026-10-03 |  |  |  |
| RHD4CZ6C062ST1106 |  | Excavation works for GRP Pipe Line 1000 mm - (RD-C-6 /2)-Z6-C062-ST | 2d | 2026-08-04 A | 2026-08-05 A | RHD4ENMSST2000, RHD4CZ6C062ST3102, RHD4GNPSMIS1000 SS, RHD4ENMSTUN1000, RHD4ENMSST1000 | 100% |  |
| RHD4CZ6C062ST1206 |  | Bedding works for GRP Pipe Line 1000 mm - (RD-C-6 /2)-Z6-C062-ST | 2d | 2026-08-06 A | 2026-08-08 A | RHD4CZ6C062ST1106 | 100% |  |

| ID | WBS | Task | Duration | Start | Finish | Predecessors | Complete | Total float |
| --- | --- | --- | --- | --- | --- | --- | --- | --- |
| RHD4CZ6C062ST1306 |  | Installing for GRP Pipe Line 1000 mm - (RD-C-6 /2)-Z6-C062-ST | 2d | 2026-08-09 A | 2026-09-22 A | RHD4CZ6C062ST1206 | 100% |  |
| RHD4CZ6C062ST1406 |  | Primary Test for GRP Pipe Line 1000 mm - (RD-C-6 /2)-Z6-C062-ST | 2d | 2026-08-11 A | 2026-08-12 A | RHD4CZ6C062ST1306 | 100% |  |
| RHD4CZ6C062ST1506 |  | Backfilling and warning tape works for GRP Pipe Line 1000 mm - (RD-C-6 /2)-Z6-C062-ST | 2d | 2026-08-16 A | 2026-10-03 A | RHD4CZ6C062ST1406 | 100% |  |
|  | 5266 | **RHD4-02-002-C062-(ST)-MH Works - 1500 mm diameter** |  | 2026-08-04 | 2027-04-24 |  |  |  |
| RHD4CZ6C062ST3101 |  | Excavation and PC Blinding works for MH 1500 mm - (RD-C-6 /2)-Z6-C062-ST | 3d | 2026-08-04 A | 2026-08-06 A | RHD4ENSDZ6APPST110, RHD4ENMSST2000, RHD4PRSHLDOSST1300 | 100% |  |
| RHD4CZ6C062ST3201 |  | Installation of Base for MH 1500 mm - (RD-C-6 /2)-Z6-C062-ST | 3d | 2026-08-06 A | 2026-08-30 A | RHD4CZ6C062ST3101, RHD4PRSHLSTAGST1605 SS | 100% |  |
| RHD4CZ6C062ST3301 |  | MH Ring and C.Slab works and Backfilling works for MH 1500 mm - (RD-C-6 /2)-Z6-C062-ST | 3d | 2027-01-26 | 2027-01-28 | RHD4CZ6C062ST3201, RHD4PRSHLDOSST1605 |  | -113d |
| RHD4CZ6C062ST3401 |  | Steel Cover for MH 1500 mm - (RD-C-6 /2)-Z6-C062-ST | 2d | 2027-04-10 | 2027-04-11 | RHD4CZ6C062ST3301, RHD4CZ6C062ST2501, RHD4CZ6C062ST1500, RHD4PRSHLDOSST1705, RHD4PRSHLSTAGST1705, RHD4CZ6C062ST3400 |  | -169d |
| RHD4CZ6C062ST3501 |  | Finishing, Benching, Testing works for MH 1500 mm - (RD-C-6 /2)-Z6-C062-ST | 3d | 2027-04-21 | 2027-04-24 | RHD4CZ6C062ST3401, RHD4CZ6C062ST2500, RHD4CZ6C062ST3500, RHD4CZ6C062ST3502 |  | -177d |
|  | 5265 | **RHD4-02-002-C062-(ST)-MH Works - 1200 mm diameter** |  | 2026-08-04 | 2027-04-20 |  |  |  |
| RHD4CZ6C062ST3100 |  | Excavation and PC Blinding works for MH 1200 mm - (RD-C-6 /2)-Z6-C062-ST | 4d | 2026-08-04 A | 2026-08-06 A | RHD4CZ6C062ST3101, RHD4ENSDZ6APPST110, RHD4ENMSST2000, RHD4ENMSST2010 | 100% |  |
| RHD4CZ6C062ST3200 |  | Installation of Base for MH 1200 mm - (RD-C-6 /2)-Z6-C062-ST | 4d | 2026-08-06 A | 2026-10-20 A | RHD4CZ6C062ST3100, RHD4PRSHLSTAGST1605 SS | 100% |  |
| RHD4CZ6C062ST3300 |  | MH Ring and C.Slab works and Backfilling works for MH 1200 mm - (RD-C-6 /2)-Z6-C062-ST | 4d | 2027-01-26 | 2027-01-30 | RHD4CZ6C062ST3200, RHD4PRSHLDOSST1605 |  | -144d |
| RHD4CZ6C062ST3400 |  | Steel Cover for MH 1200 mm - (RD-C-6 /2)-Z6-C062-ST | 4d | 2027-04-05 | 2027-04-08 | RHD4CZ6C062ST3300, RHD4CZ6C062ST2501, RHD4CZ6C062ST2500, RHD4CZ6C062ST1500, RHD4PRSHLDOSST1705, RHD4PRSHLSTAGST1705, RHD4CZ6C062ST7400 |  | -171d |
| RHD4CZ6C062ST3500 |  | Finishing, Benching, Testing works for MH 1200 mm - (RD-C-6 /2)-Z6-C062-ST | 4d | 2027-04-17 | 2027-04-20 | RHD4CZ6C062ST3400, RHD4CZ6C062ST7500, RHD4CZ6C062ST1506 |  | -177d |
|  | 5254 | **RHD4-02-002-C062-(ST)-GRP Pipes - 900 mm diameter** |  |  |  |  |  |  |
|  | 5253 | **RHD4-02-002-C062-(ST)-GRP Pipes - 800 mm diameter** |  | 2026-08-05 | 2027-03-01 |  |  |  |
| RHD4CZ6C062ST1104 |  | Excavation works for GRP Pipe Line 800 mm - (RD-C-6 /2)-Z6-C062-ST | 2d | 2026-08-05 A | 2026-08-06 A | RHD4ENSDZ6APPST110, RHD4CZ5L08ST2500, RHD4CZ6C062ST3100 | 100% |  |
| RHD4CZ6C062ST1204 |  | Bedding works for GRP Pipe Line 800 mm - (RD-C-6 /2)-Z6-C062-ST | 2d | 2026-08-08 A | 2026-08-09 A | RHD4CZ6C062ST1104 | 100% |  |
| RHD4CZ6C062ST1304 |  | Installing for GRP Pipe Line 800 mm - (RD-C-6 /2)-Z6-C062-ST | 2d | 2026-08-09 A | 2026-08-10 A | RHD4CZ6C062ST1204, RHD4PRSHLSTAGST1005 SS, RHD4CZ5L016ST2500, RHD4PRSHLDOSST1605, RHD4PRSHLPOST1000, RHD4PRSHLDOSST1005 | 100% |  |
| RHD4CZ6C062ST1504 |  | Backfilling and warning tape works for GRP Pipe Line 800 mm - (RD-C-6 /2)-Z6-C062-ST | 2d | 2026-08-11 A | 2026-08-12 A | RHD4CZ6C062ST1404 | 100% |  |
| RHD4CZ6C062ST1404 |  | Primary Test for GRP Pipe Line 800 mm - (RD-C-6 /2)-Z6-C062-ST | 2d | 2027-02-28 | 2027-03-01 | RHD4CZ6C062ST1304 |  | -145d |
|  | 5252 | **RHD4-02-002-C062-(ST)-GRP Pipes - 700 mm diameter** |  | 2026-08-04 | 2027-03-01 |  |  |  |
| RHD4CZ6C062ST1103 |  | Excavation works for GRP Pipe Line 700 mm - (RD-C-6 /2)-Z6-C062-ST | 2d | 2026-08-04 A | 2026-08-05 A | RHD4CZ6C062ST1104 SS, RHD4ENSDZ6APPST110 | 100% |  |
| RHD4CZ6C062ST1203 |  | Bedding works for GRP Pipe Line 700 mm - (RD-C-6 /2)-Z6-C062-ST | 2d | 2026-08-06 A | 2026-08-08 A | RHD4CZ6C062ST1103 | 100% |  |
| RHD4CZ6C062ST1303 |  | Installing for GRP Pipe Line 700 mm - (RD-C-6 /2)-Z6-C062-ST | 2d | 2026-08-09 A | 2026-08-10 A | RHD4CZ6C062ST1203, RHD4PRSHLSTAGST1005, RHD4PRSHLDOSST1605, RHD4PRSHLPOST1000, RHD4PRSHLDOSST1005 | 100% |  |
| RHD4CZ6C062ST1503 |  | Backfilling and warning tape works for GRP Pipe Line 700 mm - (RD-C-6 /2)-Z6-C062-ST | 2d | 2026-08-11 A | 2026-08-12 A | RHD4CZ6C062ST1403, RHD4CZ6C062ST1504 | 100% |  |
| RHD4CZ6C062ST1403 |  | Primary Test for GRP Pipe Line 700 mm - (RD-C-6 /2)-Z6-C062-ST | 2d | 2027-02-28 | 2027-03-01 | RHD4CZ6C062ST1303 |  | -145d |
|  | 5251 | **RHD4-02-002-C062-(ST)-GRP Pipes - 600 mm diameter** |  | 2026-08-04 | 2027-03-01 |  |  |  |
| RHD4CZ6C062ST1102 |  | Excavation works for GRP Pipe Line 600 mm - (RD-C-6 /2)-Z6-C062-ST | 2d | 2026-08-04 A | 2026-08-05 A | RHD4CZ6C062ST1103 SS, RHD4ENSDZ6APPST110 | 100% |  |
| RHD4CZ6C062ST1202 |  | Bedding works for GRP Pipe Line 600 mm - (RD-C-6 /2)-Z6-C062-ST | 2d | 2026-08-06 A | 2026-08-08 A | RHD4CZ6C062ST1102 | 100% |  |
| RHD4CZ6C062ST1302 |  | Installing for GRP Pipe Line 600 mm - (RD-C-6 /2)-Z6-C062-ST | 2d | 2026-08-09 A | 2026-08-10 A | RHD4CZ6C062ST1202, RHD4PRSHLSTAGST1005, RHD4PRSHLDOSST1605, RHD4PRSHLPOST1000, RHD4PRSHLDOSST1005 | 100% |  |
| RHD4CZ6C062ST1502 |  | Backfilling and warning tape works for GRP Pipe Line 600 mm - (RD-C-6 /2)-Z6-C062-ST | 2d | 2026-08-11 A | 2026-08-12 A | RHD4CZ6C062ST1402, RHD4CZ6C062ST1503 | 100% |  |
| RHD4CZ6C062ST1402 |  | Primary Test for GRP Pipe Line 600 mm - (RD-C-6 /2)-Z6-C062-ST | 2d | 2027-02-28 | 2027-03-01 | RHD4CZ6C062ST1302 |  | -145d |
|  | 5250 | **RHD4-02-002-C062-(ST)-GRP Pipes - 500 mm diameter** |  | 2026-08-04 | 2027-03-01 |  |  |  |
| RHD4CZ6C062ST1101 |  | Excavation works for GRP Pipe Line 500 mm - (RD-C-6 /2)-Z6-C062-ST | 2d | 2026-08-04 A | 2026-08-05 A | RHD4CZ6C062ST1102 SS, RHD4ENSDZ6APPST110 | 100% |  |
| RHD4CZ6C062ST1201 |  | Bedding works for GRP Pipe Line 500 mm - (RD-C-6 /2)-Z6-C062-ST | 2d | 2026-08-06 A | 2026-08-08 A | RHD4CZ6C062ST1101 | 100% |  |
| RHD4CZ6C062ST1301 |  | Installing for GRP Pipe Line 500 mm - (RD-C-6 /2)-Z6-C062-ST | 2d | 2026-08-09 A | 2026-08-10 A | RHD4CZ6C062ST1201, RHD4PRSHLSTAGST1005, RHD4PRSHLDOSST1605, RHD4PRSHLPOST1000, RHD4PRSHLDOSST1005 | 100% |  |
| RHD4CZ6C062ST1501 |  | Backfilling and warning tape works for GRP Pipe Line 500 mm - (RD-C-6 /2)-Z6-C062-ST | 2d | 2026-08-11 A | 2026-08-12 A | RHD4CZ6C062ST1401, RHD4CZ6C062ST1502 | 100% |  |
| RHD4CZ6C062ST1401 |  | Primary Test for GRP Pipe Line 500 mm - (RD-C-6 /2)-Z6-C062-ST | 2d | 2027-02-28 | 2027-03-01 | RHD4CZ6C062ST1301 |  | -145d |
|  | 5249 | **RHD4-02-002-C062-(ST)-GRP Pipes - 400 mm diameter** |  | 2026-08-04 | 2027-03-01 |  |  |  |
| RHD4CZ6C062ST1100 |  | Excavation works for GRP Pipe Line 400 mm - (RD-C-6 /2)-Z6-C062-ST | 2d | 2026-08-04 A | 2026-08-05 A | RHD4CZ6C062ST1101 SS, RHD4ENSDZ6APPST110 | 100% |  |
| RHD4CZ6C062ST1200 |  | Bedding works for GRP Pipe Line 400 mm - (RD-C-6 /2)-Z6-C062-ST | 2d | 2026-08-06 A | 2026-08-08 A | RHD4CZ6C062ST1100 | 100% |  |
| RHD4CZ6C062ST1300 |  | Installing for GRP Pipe Line 400 mm - (RD-C-6 /2)-Z6-C062-ST | 2d | 2026-08-09 A | 2026-08-10 A | RHD4CZ6C062ST1200, RHD4PRSHLSTAGST1005, RHD4PRSHLDOSST1605, RHD4PRSHLPOST1000, RHD4PRSHLDOSST1005 | 100% |  |
| RHD4CZ6C062ST1500 |  | Backfilling and warning tape works for GRP Pipe Line 400 mm - (RD-C-6 /2)-Z6-C062-ST | 2d | 2026-08-11 A | 2026-08-12 A | RHD4CZ6C062ST1400, RHD4CZ6C062ST1501 | 100% |  |
| RHD4CZ6C062ST1400 |  | Primary Test for GRP Pipe Line 400 mm - (RD-C-6 /2)-Z6-C062-ST | 2d | 2027-02-28 | 2027-03-01 | RHD4CZ6C062ST1300 |  | -145d |
|  | 5272 | **RHD4-02-002-Z6-C062-Catch Basin - ST** |  | 2026-08-04 | 2027-04-15 |  |  |  |
|  | 5273 | **RHD4-02-002-C062-(ST)-Single Catch Basin Works** |  | 2026-08-04 | 2027-04-15 |  |  |  |
| RHD4CZ6C062ST7100 |  | Excavation works for Single Catch Basin - (RD-C-6 /2)-Z6-C062-ST | 6d | 2026-08-04 A | 2027-03-06 | RHD4ENSDZ6APPST110, RHD4CZ6C062RW3000, RHD4CZ6C062ST1100 | 88% | -177d |
| RHD4CZ6C062ST7200 |  | PC Blinding, Installation and Pipe connection for Single Catch Basin - (RD-C-6 /2)-Z6-C062-ST | 6d | 2026-08-06 A | 2027-03-16 | RHD4CZ6C062ST7100 | 82% | -177d |
| RHD4CZ6C062ST7300 |  | Rings & C.Slab & Final Backfill for Single Catch Basin - (RD-C-6 /2)-Z6-C062-ST | 8d | 2027-03-17 | 2027-03-25 | RHD4CZ6C062ST7200, RHD4PRSHLDOSST1305, RHD4PRSHLSTAGST1305 SS |  | -177d |
| RHD4CZ6C062ST7400 |  | Steel Cover for Single Catch Basin - (RD-C-6 /2)-Z6-C062-ST | 6d | 2027-03-27 | 2027-04-01 | RHD4CZ6C062ST7300, RHD4PRSHLDOSST1705, RHD4CZ6C062ST8400 |  | -177d |
| RHD4CZ6C062ST7500 |  | Finishing and Insulation works for Single Catch Basin - (RD-C-6 /2)-Z6-C062-ST | 12d | 2027-04-03 | 2027-04-15 | RHD4CZ6C062ST7400, RHD4CZ6C062ST8500 |  | -177d |
|  | 5274 | **RHD4-02-002-C062-(ST)-Double Catch Basin Works** |  | 2026-09-19 | 2027-03-21 |  |  |  |
| RHD4CZ6C062ST8100 |  | Excavation works for Double Catch Basin - (RD-C-6 /2)-Z6-C062-ST | 2d | 2026-09-19 A | 2027-03-08 | RHD4CZ6C062ST7100, RHD4ENSDZ6APPST110 | 50% | -171d |
| RHD4CZ6C062ST8200 |  | PC Blinding, Installation and Pipe connection for Double Catch Basin - (RD-C-6 /2)-Z6-C062-ST | 2d | 2026-09-21 A | 2027-03-14 | RHD4CZ6C062ST8100 | 50% | -171d |
| RHD4CZ6C062ST8300 |  | Rings & C.Slab & Final Backfillfor Double Catch Basin - (RD-C-6 /2)-Z6-C062-ST | 2d | 2027-03-15 | 2027-03-16 | RHD4CZ6C062ST8200, RHD4PRSHLDOSST1305, RHD4PRSHLSTAGST1305 |  | -171d |
| RHD4CZ6C062ST8400 |  | Steel Cover for Double Catch Basin - (RD-C-6 /2)-Z6-C062-ST | 2d | 2027-03-17 | 2027-03-18 | RHD4CZ6C062ST8300, RHD4PRSHLDOSST1705 |  | -171d |
| RHD4CZ6C062ST8500 |  | Finishing and Insulation works for Double Catch Basin - (RD-C-6 /2)-Z6-C062-ST | 2d | 2027-03-20 | 2027-03-21 | RHD4CZ6C062ST8400 |  | -167d |
|  | 5264 | **RHD4-02-002-C062-(ST)-UPVC Pipes - 400 mm diameter** |  | 2027-03-07 | 2027-03-28 |  |  |  |
| RHD4CZ6C062ST2101 |  | Excavation works for UPVC Pipe Line 400 mm - (RD-C-6 /2)-Z6-C062-ST | 2d | 2027-03-07 | 2027-03-08 | RHD4ENSDZ6APPST110, RHD4CZ6C062ST7100 |  | -171d |
| RHD4CZ6C062ST2201 |  | Bedding works for UPVC Pipe Line 400 mm - (RD-C-6 /2)-Z6-C062-ST | 2d | 2027-03-13 | 2027-03-14 | RHD4CZ6C062ST2101 |  | -167d |
| RHD4CZ6C062ST2301 |  | Installing for UPVC Pipe Line 400 mm - (RD-C-6 /2)-Z6-C062-ST | 2d | 2027-03-15 | 2027-03-16 | RHD4CZ6C062ST2201, RHD4PRSHLDOSST1105, RHD4PRSHLSTAGST1105 SS |  | -167d |
| RHD4CZ6C062ST2401 |  | Primary Test for UPVC Pipe Line 400 mm - (RD-C-6 /2)-Z6-C062-ST | 2d | 2027-03-17 | 2027-03-18 | RHD4CZ6C062ST2301 |  | -164d |
| RHD4CZ6C062ST2501 |  | Backfilling and warning tape works for UPVC Pipe Line 400 mm - (RD-C-6 /2)-Z6-C062-ST | 2d | 2027-03-27 | 2027-03-28 | RHD4CZ6C062ST2401, RHD4CZ6C062ST6100 |  | -170d |
|  | 5263 | **RHD4-02-002-C062-(ST)-UPVC Pipes - 300 mm diameter** |  | 2026-08-04 | 2027-04-04 |  |  |  |
| RHD4CZ6C062ST2100 |  | Excavation works for UPVC Pipe Line 300 mm - (RD-C-6 /2)-Z6-C062-ST | 4d | 2026-08-04 A | 2027-03-16 | RHD4CZ6C062ST2101, RHD4ENSDZ6APPST110 | 71% | -171d |
| RHD4CZ6C062ST2200 |  | Bedding works for UPVC Pipe Line 300 mm - (RD-C-6 /2)-Z6-C062-ST | 4d | 2026-08-06 A | 2027-03-21 | RHD4CZ6C062ST2100 | 71% | -171d |
| RHD4CZ6C062ST2300 |  | Installing for UPVC Pipe Line 300 mm - (RD-C-6 /2)-Z6-C062-ST | 4d | 2026-08-09 A | 2027-03-25 | RHD4CZ6C062ST2200, RHD4CZ6C062ST2301, RHD4PRSHLDOSST1105, RHD4PRSHLSTAGST1105 | 65% | -171d |
| RHD4CZ6C062ST2400 |  | Primary Test for UPVC Pipe Line 300 mm - (RD-C-6 /2)-Z6-C062-ST | 3d | 2027-03-27 | 2027-03-29 | RHD4CZ6C062ST2300 |  | -171d |

| ID | WBS | Task | Duration | Start | Finish | Predecessors | Complete | Total float |
| --- | --- | --- | --- | --- | --- | --- | --- | --- |
| RHD4CZ6C062ST2500 |  | Backfilling and warning tape works for UPVC Pipe Line 300 mm - (RD-C-6 /2)-Z6-C062-ST | 5d | 2027-03-30 | 2027-04-04 | RHD4CZ6C062ST2400, RHD4CZ6C062ST6100, RHD4CZ6C062ST2501 |  | -171d |
|  | 5271 | **RHD4-02-002-C062-(ST)-Concrete Encasement** |  | 2027-03-24 | 2027-03-25 |  |  |  |
| RHD4CZ6C062ST6100 |  | Pipe Encasement for Storm Pipelines - (RD-C-6 /2)-Z6-C062-ST | 2d | 2027-03-24 | 2027-03-25 | RHD4CZ6C062ST2301 SS, RHD4CZ6C062ST2300 SS, RHD4CZ6C062ST2300 FF, RHD4CZ6C062ST2301 FF, RHD4CZ6C062ST2201, RHD4CZ6C062ST2200 |  | -170d |
|  | 4299 | **RHD4-02-002-Z6-C062-Concrete Box Culvert - ST** |  | 2026-06-11 | 2026-12-15 |  |  |  |
|  | 4300 | **RHD4-02-002-C062-(ST)-Concrete Box Culvert** |  | 2026-06-11 | 2026-12-15 |  |  |  |
| RHD4CZ6C062ST4100 |  | Excavation works for Box Culvert - (RD-C-6/2)-Z6-C062-ST(Completed) | 46d | 2026-06-11 A | 2026-07-16 A | RHD4CZ8RA04RA2000 | 100% |  |
| RHD4CZ6C062ST4200 |  | PC works for Box Culvert - (RD-C-6/2)-Z6-C062-ST(Completed) | 43d | 2026-06-15 A | 2026-06-20 A | RHD4CZ6C062ST4100 SS | 100% |  |
| RHD4CZ6C062ST4400 |  | Raft works for Box Culvert - (RD-C-6/2)-Z6-C062-ST(Completed) | 21d | 2026-07-17 A | 2026-07-23 A | RHD4CZ6C062ST4200 SS | 100% |  |
| RHD4CZ6C062ST4500 |  | Wall and slab works for Box Culvert - (RD-C-6/2)-Z6-C062-ST | 7d | 2026-08-04 A | 2026-09-23 A | RHD4CZ6C062ST4400, RHD4CZ6C062ST4200, RHD4CZ8RA04RA2000, RHD4CZ6C062ST4100 | 100% |  |
| RHD4CZ6C062ST4600 |  | Insulation and Testing for Box Culvert - (RD-C-6/2)-Z6-C062-ST | 6d | 2026-09-19 A | 2026-12-05 | RHD4CZ6C062ST5400 | 80% | -184d |
| RHD4CZ6C062ST4700 |  | Backfilling works for Box Culvert - (RD-C-6/2)-Z6-C062-ST | 9d | 2026-12-06 | 2026-12-15 | RHD4CZ6C062ST4500, RHD4CZ6C062ST5300, RHD4CZ6C062ST4600 |  | -184d |
|  | 4301 | **RHD4-02-002-C062-(ST)-Concrete Chambers** |  | 2026-08-20 | 2026-11-28 |  |  |  |
| RHD4CZ6C062ST5100 |  | Excavation and Bedding for Concrete Chambers - for Box Culvert - (RD-C-6/2)-Z6-C062-ST | 4d | 2026-08-20 A | 2026-11-14 | RHD4CZ6C062ST4500 | 50% | -184d |
| RHD4CZ6C062ST5200 |  | PC works for Concrete Chambers - for Box Culvert - (RD-C-6/2)-Z6-C062-ST | 4d | 2026-08-25 A | 2026-11-18 | RHD4CZ6C062ST5100 | 50% | -184d |
| RHD4CZ6C062ST5300 |  | Installation for Concrete Chambers - for Box Culvert - (RD-C-6/2)-Z6-C062-ST | 4d | 2026-08-30 A | 2026-11-23 | RHD4CZ6C062ST5200 | 50% | -184d |
| RHD4CZ6C062ST5400 |  | Backfilling works for Concrete Chambers - for Box Culvert - (RD-C-6/2)-Z6-C062-ST | 4d | 2026-11-24 | 2026-11-28 | RHD4CZ6C062ST5300 |  | -184d |
|  | 5297 | **RHD4-02-002-Z6-C062-Sewage Network - SW** |  | 2026-08-08 | 2027-05-27 |  |  |  |
|  | 4551 | **RHD4-02-002-C062-(SW)-MH Works - 1200 mm diameter with Back drop** |  | 2026-08-11 | 2027-04-27 |  |  |  |
| RHD4CZ6C062SW3101 |  | Excavation and PC Blinding works for MH 1200 mm - (RD-C-6 /2)-Z6-C062-SW | 2d | 2026-08-11 A | 2026-08-12 A | RHD4CZ6C062ST1500, RHD4CZ6C062ST3500 | 100% |  |
| RHD4CZ6C062SW3201 |  | Installation of Base for MH 1200 mm - (RD-C-6 /2)-Z6-C062-SW | 2d | 2026-09-20 A | 2026-09-22 A | RHD4CZ6C062SW3101 | 100% |  |
| RHD4CZ6C062SW3301 |  | MH Ring and C.Slab works and Backfilling works for MH 1200 mm - (RD-C-6 /2)-Z6-C062-SW | 2d | 2027-04-21 | 2027-04-22 | RHD4CZ6C062SW3201 |  | -154d |
| RHD4CZ6C062SW3401 |  | Steel Cover for MH 1200 mm - (RD-C-6 /2)-Z6-C062-SW | 2d | 2027-04-24 | 2027-04-25 | RHD4CZ6C062ST4700, RHD4CZ6C062SW3301 |  | -154d |
| RHD4CZ6C062SW3501 |  | Finishing, Benching, Testing works for MH 1200 mm - (RD-C-6 /2)-Z6-C062-SW | 2d | 2027-04-26 | 2027-04-27 | RHD4CZ6C062SW3401 |  | -154d |
|  | 5307 | **RHD4-02-002-C062-(SW)-MH Works - 1200 mm diameter** |  | 2026-08-08 | 2027-05-27 |  |  |  |
| RHD4CZ6C062SW3100 |  | Excavation and PC Blinding works for MH 1200 mm - (RD-C-6 /2)-Z6-C062-SW | 6d | 2026-08-08 A | 2027-04-22 | RHD4ENSDZ6APPSW120, RHD4CZ6C062SW3101, RHD4CZ9L06MV1200 | 72% | -166d |
| RHD4CZ6C062SW3200 |  | Installation of Base for MH 1200 mm - (RD-C-6 /2)-Z6-C062-SW | 10d | 2026-08-10 A | 2027-04-25 | RHD4CZ6C062SW3100 | 70% | -166d |
| RHD4CZ6C062SW3300 |  | MH Ring and C.Slab works and Backfilling works for MH 1200 mm - (RD-C-6 /2)-Z6-C062-SW | 10d | 2027-04-26 | 2027-05-06 | RHD4CZ6C062SW3200, RHD4PRSHLDOSSW1305, RHD4PRSHLSTAGSW1305 |  | -166d |
| RHD4CZ6C062SW3400 |  | Steel Cover for MH 1200 mm - (RD-C-6 /2)-Z6-C062-SW | 4d | 2027-05-08 | 2027-05-11 | RHD4CZ6C062SW3300, RHD4PRSHLDOSSW1405, RHD4PRSHLSTAGSW1405 |  | -166d |
| RHD4CZ6C062SW3500 |  | Finishing, Benching, Testing works for MH 1200 mm - (RD-C-6 /2)-Z6-C062-SW | 10d | 2027-05-12 | 2027-05-27 | RHD4CZ6C062SW3400, RHD4CZ6C062SW3501 |  | -166d |
|  | 5303 | **RHD4-02-002-C062-(SW)-UPVC Pipes - 200 mm diameter** |  | 2026-08-11 | 2027-04-26 |  |  |  |
| RHD4CZ6C062SW2100 |  | Excavation works for UPVC Pipe Line 200 mm - (RD-C-6 /2)-Z6-C062-SW | 4d | 2026-08-11 A | 2026-08-22 A | RHD4ENSDZ6APPSW120, RHD4CZ6C062SW3101, RHD4CZ6C062SW3100, RHD4CZ5L016SW5201, RHD4CZ5L08ST4600 | 100% |  |
| RHD4CZ6C062SW2200 |  | Bedding works for UPVC Pipe Line 200 mm - (RD-C-6 /2)-Z6-C062-SW | 4d | 2026-08-12 A | 2026-08-23 A | RHD4CZ6C062SW2100 | 100% |  |
| RHD4CZ6C062SW2300 |  | Installing for UPVC Pipe Line 200 mm - (RD-C-6 /2)-Z6-C062-SW | 4d | 2026-08-15 A | 2026-09-17 A | RHD4CZ6C062SW2200, RHD4PRSHLSTAGSW1005, RHD4PRSHLDOSSW1305, RHD4PRSHLPOSW1000, RHD4PRSHLDOSSW1005, RHD4PRSHLDOSSW1004, RHD4PRSHLDOSSW1304, RHD4PRSHLPOSW1100, RHD4PRSHLDOSSW1104 | 100% |  |
| RHD4CZ6C062SW2500 |  | Backfilling and warning tape works for UPVC Pipe Line 200 mm - (RD-C-6 /2)-Z6-C062-SW | 4d | 2026-08-17 A | 2026-09-19 A | RHD4CZ6C062SW2400 | 100% |  |
| RHD4CZ6C062SW2400 |  | Primary Test for UPVC Pipe Line 200 mm - (RD-C-6 /2)-Z6-C062-SW | 3d | 2027-04-24 | 2027-04-26 | RHD4CZ6C062SW2300 |  | -146d |
|  | 5306 | **RHD4-02-002-C062-(SW)-Concrete Encasement** |  |  |  |  |  |  |
|  | 5334 | **RHD4-02-002-Z6-C062-Potable Network - PT** |  | 2026-08-04 | 2027-07-27 |  |  |  |
|  | 5335 | **RHD4-02-002-C062-(PT)-HDPE Pipes - 110 mm diameter** |  | 2026-08-04 | 2027-05-08 |  |  |  |
| RHD4CZ6C062PT1100 |  | Excavation works for HDPE Pipline 110 mm - (RD-C-6 /2)-Z6-C062-PT | 2d | 2026-08-04 A | 2027-04-28 | RHD4ENSDZ6APPPT130, RHD4ENMSPT2000, RHD4CZ6C062SW2500, RHD4ENMSEW2000, RHD4ENMSEW2010 | 50% | -141d |
| RHD4CZ6C062PT1200 |  | Bedding works for HDPE Pipline 110 mm - (RD-C-6 /2)-Z6-C062-PT | 2d | 2026-08-06 A | 2027-05-01 | RHD4CZ6C062PT1100 |  | -141d |
| RHD4CZ6C062PT1300 |  | Installing for HDPE Pipline 110 mm - (RD-C-6 /2)-Z6-C062-PT | 2d | 2026-08-08 A | 2027-05-03 | RHD4CZ6C062PT1200 |  | -141d |
| RHD4CZ6C062PT1400 |  | Primary Test for HDPE Pipline 110 mm - (RD-C-6 /2)-Z6-C062-PT | 2d | 2027-05-04 | 2027-05-05 | RHD4CZ6C062PT1300 |  | -139d |
| RHD4CZ6C062PT1500 |  | Backfilling and warning tape works for HDPE Pipline 110 mm - (RD-C-6 /2)-Z6-C062-PT | 2d | 2027-05-06 | 2027-05-08 | RHD4CZ6C062PT1400 |  | -139d |
|  | 5336 | **RHD4-02-002-C062-(PT)-HDPE Pipes - 160 mm diameter** |  | 2026-08-04 | 2027-05-29 |  |  |  |
| RHD4CZ6C062PT1101 |  | Excavation works for HDPE Pipline 160 mm - (RD-C-6 /2)-Z6-C062-PT | 3d | 2026-08-04 A | 2027-04-29 | RHD4CZ6C062SW2500, RHD4ENSDZ6APPPT130, RHD4ENMSPT2000 | 13% | -146d |
| RHD4CZ6C062PT1201 |  | Bedding works for HDPE Pipline 160 mm - (RD-C-6 /2)-Z6-C062-PT | 3d | 2026-08-29 A | 2027-05-11 | RHD4CZ6C062PT1101, RHD4CZ5L08PT3203 | 5% | -152.02d |
| RHD4CZ6C062PT1301 |  | Installing for HDPE Pipline 160 mm - (RD-C-6 /2)-Z6-C062-PT | 5d | 2026-09-01 A | 2027-05-22 | RHD4CZ6C062PT1201 | 3% | -152.02d |
| RHD4CZ6C062PT1401 |  | Primary Test for HDPE Pipline 160 mm - (RD-C-6 /2)-Z6-C062-PT | 2d | 2027-05-22 | 2027-05-24 | RHD4CZ6C062PT1301 |  | -152.02d |
| RHD4CZ6C062PT1501 |  | Backfilling and warning tape works for HDPE Pipline 160 mm - (RD-C-6 /2)-Z6-C062-PT | 4d | 2027-05-24 | 2027-05-29 | RHD4CZ6C062PT1401, RHD4CZ6C062PT5100 |  | -152.02d |
|  | 5340 | **RHD4-02-002-C062-(PT)-Gate Valves (Direct Buried)** |  | 2027-05-19 | 2027-05-24 |  |  |  |
| RHD4CZ6C062PT3100 |  | Installation for Direct Buried Gate Valves - (RD-C-6 /2)-Z6-C062-PT | 2d | 2027-05-19 | 2027-05-22 | RHD4CZ6C062PT1301 FF, RHD4CZ6C062PT1300 FF, RHD4CZ6C062PT1301 SS, RHD4CZ6C062PT1300 SS |  | -145.02d |
| RHD4CZ6C062PT3200 |  | Stem and Service box for Direct Buried Gate Valves - (RD-C-6 /2)-Z6-C062-PT | 2d | 2027-05-22 | 2027-05-24 | RHD4CZ6C062PT3100 |  | -145.02d |
|  | 5347 | **RHD4-02-002-C062-(PT)-Fire Hydrant** |  | 2027-05-29 | 2027-07-27 |  |  |  |
| RHD4CZ6C062PT4100 |  | Excavation and Bedding and Pipe Installation for Fire Hydrant - (RD-C-6 /2)-Z6-C062-PT | 3d | 2027-05-29 | 2027-06-01 | RHD4CZ6C062PT1501, RHD4CZ6C062PT1500, RHD4ENSDZ6APPPT130, RHD4CZ4A013LV2400, RHD4CZ2C082PT4500 |  | -152.02d |
| RHD4CZ6C062PT4200 |  | Valve Installation for Fire Hydrant - (RD-C-6 /2)-Z6-C062-PT | 2d | 2027-06-01 | 2027-06-03 | RHD4CZ6C062PT4100, RHD4CZ6C062PT3200 |  | -152.02d |
| RHD4CZ6C062PT4300 |  | Stem for Fire Hydrant - (RD-C-6 /2)-Z6-C062-PT | 2d | 2027-06-03 | 2027-06-06 | RHD4CZ6C062PT4200 |  | -152.02d |
| RHD4CZ6C062PT4400 |  | Fire Installation for Fire Hydrant - (RD-C-6 /2)-Z6-C062-PT | 2d | 2027-06-06 | 2027-06-08 | RHD4CZ6C062PT4300 |  | -152.02d |
| RHD4CZ6C062PT4500 |  | Protection Barriers for Fire Hydrant - (RD-C-6 /2)-Z6-C062-PT | 2d | 2027-07-25 | 2027-07-27 | RHD4CZ6C062PT4400, RHD4CZ4A013ST2500, RHD4CZ4L09PT2401 |  | -192.02d |
|  | 5348 | **RHD4-02-002-C062-(PT)-Concrete Encasement** |  | 2027-05-12 | 2027-05-22 |  |  |  |
| RHD4CZ6C062PT5100 |  | Pipe Encasement for Potable Pipelines - (RD-C-6 /2)-Z6-C062-PT | 4d | 2027-05-12 | 2027-05-22 | RHD4CZ6C062PT1301 FF, RHD4CZ6C062PT1300 FF, RHD4CZ6C062PT1301 SS, RHD4CZ6C062PT1300 SS, RHD4CZ6C062PT1200, RHD4CZ6C062PT1201 |  | -150.02d |
|  | 5349 | **RHD4-02-002-Z6-C062-Irrigation Network - IRR** |  | 2026-08-04 | 2027-08-31 |  |  |  |
|  | 5350 | **RHD4-02-002-C062-(IRR)-HDPE Pipes - 160 mm diameter** |  | 2026-08-04 | 2026-08-31 |  |  |  |
| RHD4CZ6C062IRR1100 |  | Excavation works for HDPE Pipline 160 mm - (RD-C-6 /2)-Z6-C062-IRR | 6d | 2026-08-04 A | 2026-08-09 A | RHD4CZ6C062PT1101 SS, RHD4ENSDZ6APPIRR140, RHD4ENMSRR2000, RHD4CZ6C062PT4500 | 100% |  |
| RHD4CZ6C062IRR1200 |  | Bedding works for HDPE Pipline 160 mm - (RD-C-6 /2)-Z6-C062-IRR | 5d | 2026-08-10 A | 2026-08-15 A | RHD4CZ6C062IRR1100 | 100% |  |
| RHD4CZ6C062IRR1300 |  | Installing for HDPE Pipline 160 mm - (RD-C-6 /2)-Z6-C062-IRR | 6d | 2026-08-16 A | 2026-08-22 A | RHD4CZ6C062IRR1200, RHD4CZ9L05SL2400 | 100% |  |
| RHD4CZ6C062IRR1400 |  | Primary Test for HDPE Pipline 160 mm - (RD-C-6 /2)-Z6-C062-IRR | 2d | 2026-08-23 A | 2026-08-24 A | RHD4CZ6C062IRR1300 | 100% |  |
| RHD4CZ6C062IRR1500 |  | Backfilling and warning tape works for HDPE Pipline 160 mm - (RD-C-6 /2)-Z6-C062-IRR | 5d | 2026-08-26 A | 2026-08-31 A | RHD4CZ6C062IRR1400, RHD4CZ4L09IRR1500 | 100% |  |
|  | 5362 | **RHD4-02-002-C062-(IRR)-Wash out Valves** |  |  |  |  |  |  |
|  | 5363 | **RHD4-02-002-C062-(IRR)-Air Valve Chamber** |  | 2027-08-19 | 2027-08-29 |  |  |  |
| RHD4CZ6C062IRR2102 |  | Excavation and Bedding for Valve Chamber for Irrigation Network - (RD-C-6 /2)-Z6-C062-IRR | 2d | 2027-08-19 | 2027-08-22 | RHD4CZ6C062IRR1500, RHD4ENSDZ6APPIRR140 |  | -184.02d |

| ID | WBS | Task | Duration | Start | Finish | Predecessors | Total float |
| --- | --- | --- | --- | --- | --- | --- | --- |
| RHD4CZ6C062IRR2202 |  | PC works for Valve Chamber for Irrigation Network - (RD-C-6 /2)-Z6-C062-IRR | 2d | 2027-08-22 | 2027-08-24 | RHD4CZ6C062IRR2102 | -184.02d |
| RHD4CZ6C062IRR2302 |  | Installation for Valve Chamber for Irrigation Network - (RD-C-6 /2)-Z6-C062-IRR | 2d | 2027-08-24 | 2027-08-26 | RHD4CZ6C062IRR2202 | -184.02d |
| RHD4CZ6C062IRR2402 |  | Backfilling works for Valve Chamber for Irrigation Network - (RD-C-6 /2)-Z6-C062-IRR | 2d | 2027-08-26 | 2027-08-29 | RHD4CZ6C062IRR2302 | -184.02d |
|  | 5364 | **RHD4-02-002-C062-(IRR)-Air Valves** |  | 2027-08-26 | 2027-08-31 |  |  |
| RHD4CZ6C062IRR3103 |  | Installation for Air Valves for Irrigation Network - (RD-C-6 /2)-Z6-C062-IRR | 2d | 2027-08-26 | 2027-08-29 | RHD4CZ6C062IRR2302 | -184.02d |
| RHD4CZ6C062IRR3203 |  | Stem and Service box for Air Valves for Irrigation Network - (RD-C-6 /2)-Z6-C062-IRR | 2d | 2027-08-29 | 2027-08-31 | RHD4CZ6C062IRR3103, RHD4CZ6C062IRR2402 | -184.02d |
|  | 5365 | **RHD4-02-002-C062-(IRR)-Concrete Encasement** |  |  |  |  |  |
|  | 6115 | **RHD4-02-002-C062-(IRR)-Gate Valves (Direct Buried)** |  | 2027-07-27 | 2027-08-01 |  |  |
| RHD4CZ6C062IRR3100 |  | Installation for Direct Buried Gate Valves - (RD-C-6 /2)-Z6-C062-IRR | 2d | 2027-07-27 | 2027-07-29 | RHD4CZ6C062IRR1100 SS | -154.02d |
| RHD4CZ6C062IRR3200 |  | Stem and Service box for Direct Buried Gate Valves - (RD-C-6 /2)-Z6-C062-IRR | 2d | 2027-07-29 | 2027-08-01 | RHD4CZ6C062IRR3100 | -154.02d |
|  | 5361 | **RHD4-02-002-C062-(IRR)-Wash out Chamber** |  |  |  |  |  |
|  | 5383 | **RHD4-02-002-Z6-C062-Medium Voltage Network - MV** |  | 2027-03-08 | 2027-05-05 |  |  |
|  | 5384 | **RHD4-02-002-C062-(MV)-Medium Voltage cable trench** |  | 2027-04-03 | 2027-04-20 |  |  |
| RHD4CZ6C062MV1100 |  | Excavation for Medium Voltage Trench - (RD-C-6 /2)-Z6-C062-MV | 8d | 2027-04-03 | 2027-04-11 | RHD4ENSDZ6APPMV150, RHD4CZ6C062RD3100, RHD4CZ6C062ST7400 | -172d |
| RHD4CZ6C062MV1200 |  | Trench Backfilling for Medium Voltage Network - (RD-C-6 /2)-Z6-C062-MV | 8d | 2027-04-12 | 2027-04-20 | RHD4CZ6C062MV1100 | -169d |
|  | 5385 | **RHD4-02-002-C062-(MV)-Medium Voltage duct banks** |  | 2027-03-08 | 2027-03-20 |  |  |
| RHD4CZ6C062MV2100 |  | Excavation of Duct Banks for Medium Voltage Network - (RD-C-6 /2)-Z6-C062-MV | 2d | 2027-03-08 | 2027-03-13 | RHD4CZ6C062RW3000, RHD4CZ6C062RD3100 | -167d |
| RHD4CZ6C062MV2200 |  | Installation of Duct Banks for Medium Voltage Network - (RD-C-6 /2)-Z6-C062-MV | 2d | 2027-03-14 | 2027-03-15 | RHD4CZ6C062MV2100 | -167d |
| RHD4CZ6C062MV2300 |  | Pouring of Duct Banks for Medium Voltage Network - (RD-C-6 /2)-Z6-C062-MV | 2d | 2027-03-16 | 2027-03-17 | RHD4CZ6C062MV2200 | -167d |
| RHD4CZ6C062MV2400 |  | Backfilling of Duct Banks for Medium Voltage Network - (RD-C-6 /2)-Z6-C062-MV | 2d | 2027-03-18 | 2027-03-20 | RHD4CZ6C062MV2300 | -167d |
|  | 5386 | **RHD4-02-002-C062-(MV)-Medium Voltage cables 3Cx 500 mm²** |  | 2027-04-12 | 2027-05-05 |  |  |
| RHD4CZ6C062MV3100 |  | Installation of Medium Voltage Cables 3Cx 500 mm² - (RD-C-6 /2)-Z6-C062-MV | 8d | 2027-04-12 | 2027-04-20 | RHD4CZ6C062MV1100, RHD4ENMSMV2000, RHD4ENMSMV2010 | -172d |
| RHD4CZ6C062MV3200 |  | Joints Installation of Medium Voltage Cables 3Cx 500 mm² - (RD-C-6 /2)-Z6-C062-MV | 3d | 2027-04-21 | 2027-04-24 | RHD4CZ6C062MV3100 | -172d |
| RHD4CZ6C062MV3300 |  | Testing of Medium Voltage Cables 3Cx 500 mm² - (RD-C-6 /2)-Z6-C062-MV | 8d | 2027-04-25 | 2027-05-03 | RHD4CZ6C062MV3200, RHD4CZ6C062MV1200 | -172d |
| RHD4CZ6C062MV3400 |  | Termination of Medium Voltage Cables 3Cx 500 mm² - (RD-C-6 /2)-Z6-C062-MV | 2d | 2027-05-04 | 2027-05-05 | RHD4CZ6C062MV3300 | -172d |
|  | 5387 | **RHD4-02-002-C062-(MV)-Medium Voltage cables 3Cx 50 mm²** |  | 2027-05-04 | 2027-05-05 |  |  |
| RHD4CZ6C062MV3401 |  | Termination of Medium Voltage Cables 3Cx 50 mm² - (RD-C-6 /2)-Z6-C062-MV | 2d | 2027-05-04 | 2027-05-05 | RHD4CZ6C062MV3400 SS, RHD4CZ6C062MV3300 | -172d |
|  | 5388 | **RHD4-02-002-C062-(MV)-Normally open Point (Outdoor Type)** |  |  |  |  |  |
|  | 5390 | **RHD4-02-002-Z6-C062-Low Voltage Network - LV** |  | 2027-08-19 | 2027-09-15 |  |  |
|  | 5391 | **RHD4-02-002-C062-(LV)-Low Voltage duct banks** |  | 2027-08-19 | 2027-08-30 |  |  |
| RHD4CZ6C062LV2100 |  | Excavation of Duct Banks for Low Voltage Network - (RD-C-6 /2)-Z6-C062-LV | 2d | 2027-08-19 | 2027-08-22 | RHD4CZ6C062RW3000, RHD4ENSDZ6APPLV160, RHD4CZ6C062MV2100 SS, RHD4CZ6C062IRR1500, RHD4CZ7A012ST7500 | -192.02d |
| RHD4CZ6C062LV2200 |  | Installation of Duct Banks for Low Voltage Network - (RD-C-6 /2)-Z6-C062-LV | 3d | 2027-08-22 | 2027-08-25 | RHD4CZ6C062LV2100 | -192.02d |
| RHD4CZ6C062LV2300 |  | Pouring of Duct Banks for Low Voltage Network - (RD-C-6 /2)-Z6-C062-LV | 2d | 2027-08-25 | 2027-08-28 | RHD4CZ6C062LV2200 | -192.02d |
| RHD4CZ6C062LV2400 |  | Backfilling of Duct Banks for Low Voltage Network - (RD-C-6 /2)-Z6-C062-LV | 2d | 2027-08-28 | 2027-08-30 | RHD4CZ6C062LV2300 | -190.02d |
|  | 5392 | **RHD4-02-002-C062-(LV)-Low Voltage Drawpit** |  | 2027-08-28 | 2027-09-01 |  |  |
| RHD4CZ6C062LV5100 |  | Excavation of Drawpit size 900x900x1000mm for Low Voltage Network - (RD-C-6 /2)-Z6-C062-LV | 2d | 2027-08-28 | 2027-08-30 | RHD4CZ6C062LV2300, RHD4ENSDZ6APPLV160 | -192.02d |
| RHD4CZ6C062LV5200 |  | Installation of Drawpit size 900x900x1000mm for Low Voltage Network - (RD-C-6 /2)-Z6-C062-LV | 2d | 2027-08-30 | 2027-09-01 | RHD4CZ6C062LV5100, RHD4PRSHLDOSLV1400, RHD4PRSHLSTAGLV1400 | -192.02d |
|  | 5393 | **RHD4-02-002-C062-(LV)-Low Voltage cables** |  | 2027-09-01 | 2027-09-15 |  |  |
| RHD4CZ6C062LV3100 |  | Excavation for Low Voltage Cables for Low Voltage Network - (RD-C-6 /2)-Z6-C062-LV | 4d | 2027-09-01 | 2027-09-06 | RHD4CZ6C062LV2400, RHD4ENSDZ6APPLV160, RHD4CZ6C062LV5200 | -192.02d |
| RHD4CZ6C062LV3200 |  | Cable Laying of Low Voltage Cables for Low Voltage Network - (RD-C-6 /2)-Z6-C062-LV | 3d | 2027-09-06 | 2027-09-09 | RHD4CZ6C062LV3100, RHD4ENMSLV2000, RHD4ENMSLV2010 | -192.02d |
| RHD4CZ6C062LV3300 |  | Warning tape and Backfill for Low Voltage Cables for Low Voltage Network - (RD-C-6 /2)-Z6-C062-LV | 3d | 2027-09-09 | 2027-09-13 | RHD4CZ6C062LV3200 | -192.02d |
| RHD4CZ6C062LV3400 |  | Testing of Low Voltage Cables for Low Voltage Network - (RD-C-6 /2)-Z6-C062-LV | 2d | 2027-09-13 | 2027-09-15 | RHD4CZ6C062LV3300 | -192.02d |
|  | 4259 | **RHD4-02-002-C062-(LV)-Low Voltage Distribution Pillars** |  |  |  |  |  |
|  | 5396 | **RHD4-02-002-Z6-C062-Street Lighting Network - SL** |  | 2027-09-15 | 2027-10-17 |  |  |
|  | 5399 | **RHD4-02-002-C062-(SL)-Street Lighting cables** |  | 2027-09-15 | 2027-09-29 |  |  |
| RHD4CZ6C062SL3100 |  | Excavation for Street Lighting Cables for Street Lighting Network - (RD-C-6 /2)-Z6-C062-SL | 3d | 2027-09-15 | 2027-09-19 | RHD4ENSDZ6APPSL170, RHD4CZ6C062LV3400 | -191.02d |
| RHD4CZ6C062SL3200 |  | Cable Laying of Street Lighting Cables for Street Lighting Network - (RD-C-6 /2)-Z6-C062-SL | 3d | 2027-09-19 | 2027-09-22 | RHD4CZ6C062SL3100, RHD4PRSHLDOSSL1100, RHD4ENMSSL2000, RHD4ENMSSL2010, RHD4PRSHLSTAGSL1100 | -191.02d |
| RHD4CZ6C062SL3300 |  | Warning tape and Backfill for Street Lighting Cables for Street Lighting Network - (RD-C-6 /2)-Z6-C062-SL | 3d | 2027-09-22 | 2027-09-27 | RHD4CZ6C062SL3200 | -191.02d |
| RHD4CZ6C062SL3400 |  | Testing of Street Lighting Cables for Street Lighting Network - (RD-C-6 /2)-Z6-C062-SL | 2d | 2027-09-27 | 2027-09-29 | RHD4CZ6C062SL3300 | -191.02d |
|  | 5400 | **RHD4-02-002-C062-(SL)-Street Lighting Poles** |  | 2027-09-29 | 2027-10-17 |  |  |
| RHD4CZ6C062SL1100 |  | Excavation for RC Base for Lighting Poles for Street Lighting Network - (RD-C-6 /2)-Z6-C062-SL | 2d | 2027-09-29 | 2027-10-02 | RHD4ENSDZ6APPSL170, RHD4CZ6C062SL3400 | -191.02d |
| RHD4CZ6C062SL1200 |  | Installation for RC Base for Lighting Poles for Street Lighting Network - (RD-C-6 /2)-Z6-C062-SL | 2d | 2027-10-02 | 2027-10-04 | RHD4CZ6C062SL1100 | -191.02d |
| RHD4CZ6C062SL1300 |  | Backfill for RC Base for Lighting Poles for Street Lighting Network - (RD-C-6 /2)-Z6-C062-SL | 2d | 2027-10-04 | 2027-10-06 | RHD4CZ6C062SL1200 | -191.02d |
| RHD4CZ6C062SL1400 |  | Installation for Lighting Poles for Street Lighting Network - (RD-C-6 /2)-Z6-C062-SL | 3d | 2027-10-06 | 2027-10-10 | RHD4CZ6C062SL1300, RHD4PRSHLDOSSL1200, RHD4ENMSSL2000, RHD4ENMSSL2010, RHD4CZ6C062LV3400 | -191.02d |
| RHD4CZ6C062SL1500 |  | Luminaire Installation for Lighting Poles for Street Lighting Network - (RD-C-6 /2)-Z6-C062-SL | 4d | 2027-10-12 | 2027-10-17 | RHD4CZ6C062SL1400, RHD4CZ6C062SL6100 | -191.02d |
|  | 5402 | **RHD4-02-002-C062-(SL)-Street Lighting Earthing System** |  | 2027-10-10 | 2027-10-12 |  |  |
| RHD4CZ6C062SL6100 |  | Installation of Earthing for Lighting Poles and Fedder Pillers for Street Lighting Network - (RD-C-6 /2)-Z6-C062-SL | 2d | 2027-10-10 | 2027-10-12 | RHD4CZ6C062SL1400, RHD4ENMSER2000, RHD4ENMSER2010 | -191.02d |
|  | 5408 | **RHD4-02-002-Z6-C062-Telecommunications Network - TC** |  | 2027-08-19 | 2027-11-30 |  |  |
|  | 5409 | **RHD4-02-002-C062-(TC)-Telecommunications Ducts** |  | 2027-10-17 | 2027-11-30 |  |  |
| RHD4CZ6C062TC2100 |  | Excavation of HDPE Ducts for Telecom Network - (RD-C-6 /2)-Z6-C062-TC | 11d | 2027-10-17 | 2027-10-30 | RHD4ENSDZ6APPTC190, RHD4CZ6C062SL1500 | -191.02d |
| RHD4CZ6C062TC2200 |  | Installation of HDPE Ducts for Telecom Network - (RD-C-6 /2)-Z6-C062-TC | 16d | 2027-10-30 | 2027-11-17 | RHD4CZ6C062TC2100 | -191.02d |
| RHD4CZ6C062TC2400 |  | Backfilling of HDPE Ducts for Telecom Network - (RD-C-6 /2)-Z6-C062-TC | 11d | 2027-11-17 | 2027-11-30 | RHD4CZ6C062TC2200, RHD4CZ6C062TC5200 | -191.02d |
|  | 5410 | **RHD4-02-002-C062-(TC)-Telecommunications Manholes** |  | 2027-10-30 | 2027-11-08 |  |  |
| RHD4CZ6C062TC5100 |  | Excavation for Manholes for Telecom Network - (RD-C-6 /2)-Z6-C062-TC | 4d | 2027-10-30 | 2027-11-03 | RHD4CZ6C062TC2100, RHD4ENSDZ6APPTC190 | -183.02d |
| RHD4CZ6C062TC5200 |  | Installation of Manholes for Telecom Network - (RD-C-6 /2)-Z6-C062-TC | 4d | 2027-11-03 | 2027-11-08 | RHD4CZ6C062TC5100, RHD4CZ6C062TC2200 SS | -183.02d |
|  | 5411 | **RHD4-02-002-C062-(TC)-Telecomminications Road Crossings** |  | 2027-08-19 | 2027-08-29 |  |  |
| RHD4CZ6C062TC3100 |  | Excavation for Road Crossings for Telecom Network - (RD-C-6 /2)-Z6-C062-TC | 2d | 2027-08-19 | 2027-08-22 | RHD4ENSDZ6APPTC190, RHD4CZ6C062LV2100 SS | -190.02d |
| RHD4CZ6C062TC3200 |  | Installation of Road Crossings for Telecom Network - (RD-C-6 /2)-Z6-C062-TC | 2d | 2027-08-22 | 2027-08-24 | RHD4CZ6C062TC3100, RHD4PRSHLDOSTC1100, RHD4PRSHLSTAGTC1100 | -190.02d |
| RHD4CZ6C062TC3300 |  | Pouring of Road Crossings for Telecom Network - (RD-C-6 /2)-Z6-C062-TC | 2d | 2027-08-24 | 2027-08-26 | RHD4CZ6C062TC3200 | -190.02d |
| RHD4CZ6C062TC3400 |  | Backfilling of Road Crossings for Telecom Network - (RD-C-6 /2)-Z6-C062-TC | 2d | 2027-08-26 | 2027-08-29 | RHD4CZ6C062TC3300, RHD4CZ9C071PT3203 | -190.02d |

| ID | WBS | Task | Duration | Start | Finish | Predecessors | Complete | Total float |
| --- | --- | --- | --- | --- | --- | --- | --- | --- |
|  | 5412 | **RHD4-02-002-Z6-C062-Information and Communication Technologies - ICT** |  | 2027-08-19 | 2028-01-10 |  |  |  |
|  | 5413 | **RHD4-02-002-C062-(ICT)-Information and Communication Technologies Ducts** |  | 2027-11-30 | 2028-01-10 |  |  |  |
| RHD4CZ6C062ICT2100 |  | Excavation of HDPE Ducts for ICT Network - (RD-C-6 /2)-Z6-C062-ICT | 10d | 2027-11-30 | 2027-12-12 | RHD4ENSDZ6APPICT200, RHD4CZ6C062TC3100 SS, RHD4CZ6C062TC2400 |  | -190.02d |
| RHD4CZ6C062ICT2200 |  | Installation of HDPE Ducts for ICT Network - (RD-C-6 /2)-Z6-C062-ICT | 15d | 2027-12-12 | 2027-12-29 | RHD4CZ6C062ICT2100 |  | -190.02d |
| RHD4CZ6C062ICT2400 |  | Backfilling of HDPE Ducts for ICT Network - (RD-C-6 /2)-Z6-C062-ICT | 10d | 2027-12-29 | 2028-01-10 | RHD4CZ6C062ICT2200, RHD4CZ6C062ICT5200 |  | -190.02d |
|  | 5414 | **RHD4-02-002-C062-(ICT)-Information and Communication Technologies Manholes** |  | 2027-12-12 | 2027-12-21 |  |  |  |
| RHD4CZ6C062ICT5100 |  | Excavation for Manholes for ICT Network - (RD-C-6 /2)-Z6-C062-ICT | 4d | 2027-12-12 | 2027-12-16 | RHD4CZ6C062ICT2100, RHD4ENSDZ6APPICT200 |  | -183.02d |
| RHD4CZ6C062ICT5200 |  | Installation of Manholes for ICT Network - (RD-C-6 /2)-Z6-C062-ICT | 4d | 2027-12-16 | 2027-12-21 | RHD4CZ6C062ICT5100, RHD4PRSHLDOSICT1200, RHD4PRSHLSTAGICT1200 |  | -183.02d |
|  | 5415 | **RHD4-02-002-C062-(ICT)-Information and Communication Technologies Road Crossings** |  | 2027-08-19 | 2027-08-31 |  |  |  |
| RHD4CZ6C062ICT3100 |  | Excavation for Road Crossings for ICT Network - (RD-C-6 /2)-Z6-C062-ICT | 2d | 2027-08-19 | 2027-08-22 | RHD4CZ6C062TC3100 SS, RHD4ENSDZ6APPICT200 |  | -188.02d |
| RHD4CZ6C062ICT3200 |  | Installation of Road Crossings for ICT Network - (RD-C-6 /2)-Z6-C062-ICT | 2d | 2027-08-24 | 2027-08-26 | RHD4CZ6C062ICT3100, RHD4CZ6C062TC3200, RHD4PRSHLDOSICT1100, RHD4PRSHLSTAGICT1100 |  | -190.02d |
| RHD4CZ6C062ICT3300 |  | Pouring of Road Crossings for ICT Network - (RD-C-6 /2)-Z6-C062-ICT | 2d | 2027-08-26 | 2027-08-29 | RHD4CZ6C062ICT3200, RHD4CZ6C062TC3300 |  | -190.02d |
| RHD4CZ6C062ICT3400 |  | Backfilling of Road Crossings for ICT Network - (RD-C-6 /2)-Z6-C062-ICT | 2d | 2027-08-29 | 2027-08-31 | RHD4CZ6C062ICT3300, RHD4CZ6C062TC3400 |  | -190.02d |
|  | 5403 | **RHD4-02-002-Z6-C062-Landscape Network - LS** |  |  |  |  |  |  |
|  | 5404 | **RHD4-02-002-C062-(LS)-Landscape Lighting cables** |  |  |  |  |  |  |
|  | 5406 | **RHD4-02-002-C062-(LS)-Landscape Bollard Poles** |  |  |  |  |  |  |
|  | 5416 | **RHD4-02-002-Z6-C062-Security Network - CCTV** |  |  |  |  |  |  |
|  | 5417 | **RHD4-02-002-C062-(CCTV)-Civil Works** |  |  |  |  |  |  |
|  | 4851 | **RHD4-02-002-C062-(CCTV)-CCTV Poles** |  |  |  |  |  |  |
|  | 4852 | **RHD4-02-002-C062-(CCTV)-Camera** |  |  |  |  |  |  |
|  | 4853 | **RHD4-02-002-C062-(CCTV)-Power and Infrastructure** |  |  |  |  |  |  |
|  | 4855 | **RHD4-02-002-C062-(CCTV)-CCTV Panels and Components** |  |  |  |  |  |  |
|  | 4677 | **RHD4-02-002-Z6-A015** |  | 2026-05-30 | 2028-02-01 |  |  |  |
|  | 4752 | **RHD4-02-002-Z6-A015-Crossings Potable Network - PTCr** |  |  |  |  |  |  |
|  | 4755 | **RHD4-02-002-A015-(PTCr)-HDPE Pipes - 200 mm diameter** |  |  |  |  |  |  |
|  | 4765 | **RHD4-02-002-A015-(PTCr)-Fire Hydrant** |  |  |  |  |  |  |
|  | 4799 | **RHD4-02-002-Z6-A015-Crossings Irrigation Network - IRRC** |  |  |  |  |  |  |
|  | 4800 | **RHD4-02-002-A015-(IRRC)-HDPE Pipes - 160 mm diameter** |  |  |  |  |  |  |
|  | 4856 | **RHD4-02-002-Z6-A015-Road Works - RD** |  | 2026-06-02 | 2028-02-01 |  |  |  |
|  | 4857 | **RHD4-02-002-A015-(RD)-Subgrade** |  | 2026-06-02 | 2026-06-21 |  |  |  |
| RHD4CZ6A015RD1100 |  | Supply, lay and compaction subgrade compacted thickness 300 mm for Roads - (RD-A-1 /5)-Z6-A015-RD | 4d | 2026-06-02 A | 2026-06-21 A | RHD4ENSDZ6APPRD220, RHD4ENSDZ6APPEW100 SS, RHD4CZ6A015ST3301, RHD4CZ6A015ST1503, RHD4CZ6A015TC3400, RHD4CZ6A015ICT3400 | 100% |  |
|  | 4858 | **RHD4-02-002-A015-(RD)-Aggregate Base Course** |  | 2026-08-29 | 2026-09-24 |  |  |  |
| RHD4CZ6A015RD2100 |  | Supply, lay and compaction Aggregate base course compacted thickness 300 mmfor Roads - (RD-A-1 /5)-Z6-A015-RD | 4d | 2026-08-29 A | 2026-09-24 A | RHD4PRSHLDOSRD1000, RHD4PRSHLSTAGRD1000, RHD4CZ6A015RD1100 | 100% |  |
|  | 4859 | **RHD4-02-002-A015-(RD)-Bituminous base course Two Layers, including (MC1)&(RC2)** |  | 2026-09-02 | 2028-01-12 |  |  |  |
| RHD4CZ6A015RD3100 |  | Supply, lay and Asphaltic base course including Prime Coat (MC1) for 1st Layer - (RD-A-1 /5)-Z6-A015-RD | 4d | 2026-09-02 A | 2026-10-03 A | RHD4CZ6A015RD2100, RHD4PRSHLDOSRD1100, RHD4ENMSASPH2000, RHD4ENMSASPH2010, RHD4PRSHLSTAGRD1100 | 100% |  |
| RHD4CZ6A015RD3200 |  | Supply, lay and Asphaltic base course including Tack Coat (RC2) for 2nd Layer - (RD-A-1 /5)-Z6-A015-RD | 4d | 2028-01-08 | 2028-01-12 | RHD4PRSHLDOSRD1100, RHD4PRSHLSTAGRD1100, RHD4CZ6A015CCTV6100 |  | -191.02d |
|  | 4861 | **RHD4-02-002-A015-(RD)-Precast Concrete Curb** |  | 2028-01-12 | 2028-01-20 |  |  |  |
| RHD4CZ6A015RD5100 |  | Supply and installation Precast Concrete Kerb for Roads - (RD-A-1 /5)-Z6-A015-RD | 7d | 2028-01-12 | 2028-01-20 | RHD4CZ6A015RD3200, RHD4PRSHLDOSRD1200, RHD4ENMSRD2000, RHD4ENMSRD2010, RHD4PRSHLSTAGRD1200 |  | -191.02d |
|  | 4864 | **RHD4-02-002-A015-(RD)-Traffic Signage** |  | 2028-01-20 | 2028-01-27 |  |  |  |
| RHD4CZ6A015RD8100 |  | Installation of Traffic Signage for Road Network - (RD-A-1 /5)-Z6-A015-RD | 6d | 2028-01-20 | 2028-01-27 | RHD4CZ6A015RD5100 |  | -191.02d |
|  | 4862 | **RHD4-02-002-A015-(RD)-Precast Interlocking Block Pavers** |  |  |  |  |  |  |
|  | 4860 | **RHD4-02-002-A015-(RD)-Bituminous concrete wearing course including tack coat (RC2)** |  | 2028-01-20 | 2028-01-23 |  |  |  |
| RHD4CZ6A015RD4100 |  | Supply, lay and compaction Asphaltic wearing course including tack Coat (RC2)for Road Network - (RD-A-1 /5)-Z6-A015-RD | 2d | 2028-01-20 | 2028-01-23 | RHD4CZ6A015RD5100 |  | -187.02d |
|  | 4863 | **RHD4-02-002-A015-(RD)-Pavement Marking** |  | 2028-01-27 | 2028-02-01 |  |  |  |
| RHD4CZ6A015RD7100 |  | Pavement Markings for Road Network - (RD-A-1 /5)-Z6-A015-RD | 4d | 2028-01-27 | 2028-02-01 | RHD4CZ6A015RD4100, RHD4CZ6A015RD8100 |  | -191.02d |
|  | 4681 | **RHD4-02-002-Z6-A015-Storm Network - ST** |  | 2026-08-04 | 2027-04-04 |  |  |  |
|  | 4699 | **RHD4-02-002-A015-(ST)-MH Works - 1500 mm diameter** |  | 2026-08-04 | 2027-01-20 |  |  |  |
| RHD4CZ6A015ST3101 |  | Excavation and PC Blinding works for MH 1500 mm - (RD-A-1 /5)-Z6-A015-ST | 2d | 2026-08-04 A | 2026-08-06 A | RHD4ENSDZ6APPST110, RHD4ENMSST2000, RHD4CZ6C062RW3000, RHD4PRSHLDOSST1307 | 100% |  |
| RHD4CZ6A015ST3201 |  | Installation of Base for MH 1500 mm - (RD-A-1 /5)-Z6-A015-ST | 2d | 2026-08-06 A | 2026-08-09 A | RHD4CZ6A015ST3101, RHD4PRSHLSTAGST1605 | 100% |  |
| RHD4CZ6A015ST3301 |  | MH Ring and C.Slab works and Backfilling works for MH 1500 mm - (RD-A-1 /5)-Z6-A015-ST | 2d | 2026-09-05 A | 2026-09-06 A | RHD4CZ6A015ST3201, RHD4PRSHLDOSST1605 | 100% |  |
| RHD4CZ6A015ST3401 |  | Steel Cover for MH 1500 mm - (RD-A-1 /5)-Z6-A015-ST | 2d | 2027-01-17 | 2027-01-18 | RHD4CZ6A015ST3301, RHD4CZ6A015ST1500, RHD4PRSHLDOSST1705, RHD4PRSHLSTAGST1705 |  | -194d |
| RHD4CZ6A015ST3501 |  | Finishing, Benching, Testing works for MH 1500 mm - (RD-A-1 /5)-Z6-A015-ST | 2d | 2027-01-19 | 2027-01-20 | RHD4CZ6A015ST3401, RHD4CZ6A015ST2500 |  | -194d |
|  | 4698 | **RHD4-02-002-A015-(ST)-MH Works - 1200 mm diameter** |  | 2026-08-04 | 2027-04-04 |  |  |  |
| RHD4CZ6A015ST3100 |  | Excavation and PC Blinding works for MH 1200 mm - (RD-A-1 /5)-Z6-A015-ST | 5d | 2026-08-04 A | 2026-08-06 A | RHD4CZ6A015ST3101, RHD4ENSDZ6APPST110, RHD4ENMSST2000, RHD4ENMSST2010 | 100% |  |
| RHD4CZ6A015ST3200 |  | Installation of Base for MH 1200 mm - (RD-A-1 /5)-Z6-A015-ST | 5d | 2026-08-06 A | 2026-08-28 A | RHD4CZ6A015ST3100, RHD4PRSHLSTAGST1605 | 100% |  |
| RHD4CZ6A015ST3300 |  | MH Ring and C.Slab works and Backfilling works for MH 1200 mm - (RD-A-1 /5)-Z6-A015-ST | 5d | 2026-09-05 A | 2026-09-09 A | RHD4CZ6A015ST3200, RHD4PRSHLDOSST1605 | 100% |  |
| RHD4CZ6A015ST3400 |  | Steel Cover for MH 1200 mm - (RD-A-1 /5)-Z6-A015-ST | 5d | 2027-03-23 | 2027-03-29 | RHD4CZ6A015ST3300, RHD4CZ6A015ST2500, RHD4CZ6A015ST1500, RHD4PRSHLDOSST1705, RHD4PRSHLSTAGST1705, RHD4CZ6A015PT4300 |  | -147.04d |
| RHD4CZ6A015ST3500 |  | Finishing, Benching, Testing works for MH 1200 mm - (RD-A-1 /5)-Z6-A015-ST | 5d | 2027-03-29 | 2027-04-04 | RHD4CZ6A015ST3400, RHD4CZ6A015ST3501 |  | -147.04d |
|  | 4685 | **RHD4-02-002-A015-(ST)-GRP Pipes - 700 mm diameter** |  | 2026-08-04 | 2026-12-28 |  |  |  |
| RHD4CZ6A015ST1103 |  | Excavation works for GRP Pipe Line 700 mm - (RD-A-1 /5)-Z6-A015-ST | 2d | 2026-08-04 A | 2026-08-05 A | RHD4CZ6A015ST3201, RHD4CZ6A015ST3200, RHD4ENSDZ6APPST110 | 100% |  |
| RHD4CZ6A015ST1203 |  | Bedding works for GRP Pipe Line 700 mm - (RD-A-1 /5)-Z6-A015-ST | 2d | 2026-08-06 A | 2026-08-08 A | RHD4CZ6A015ST1103 | 100% |  |
| RHD4CZ6A015ST1303 |  | Installing for GRP Pipe Line 700 mm - (RD-A-1 /5)-Z6-A015-ST | 2d | 2026-08-09 A | 2026-08-10 A | RHD4CZ6A015ST1203, RHD4CZ6A015ST3301, RHD4CZ6A015ST3300, RHD4PRSHLSTAGST1005, RHD4PRSHLDOSST1605, RHD4PRSHLPOST1000, RHD4PRSHLDOSST1005 | 100% |  |
| RHD4CZ6A015ST1503 |  | Backfilling and warning tape works for GRP Pipe Line 700 mm - (RD-A-1 /5)-Z6-A015-ST | 2d | 2026-09-05 A | 2026-09-06 A | RHD4CZ6A015ST1403 | 100% |  |
| RHD4CZ6A015ST1403 |  | Primary Test for GRP Pipe Line 700 mm - (RD-A-1 /5)-Z6-A015-ST | 2d | 2026-12-27 | 2026-12-28 | RHD4CZ6A015ST1303 |  | -187d |
|  | 4684 | **RHD4-02-002-A015-(ST)-GRP Pipes - 600 mm diameter** |  | 2026-08-04 | 2026-12-28 |  |  |  |
| RHD4CZ6A015ST1102 |  | Excavation works for GRP Pipe Line 600 mm - (RD-A-1 /5)-Z6-A015-ST | 2d | 2026-08-04 A | 2026-08-05 A | RHD4CZ6A015ST1103, RHD4ENSDZ6APPST110 | 100% |  |
| RHD4CZ6A015ST1202 |  | Bedding works for GRP Pipe Line 600 mm - (RD-A-1 /5)-Z6-A015-ST | 2d | 2026-08-06 A | 2026-08-08 A | RHD4CZ6A015ST1102 | 100% |  |
| RHD4CZ6A015ST1302 |  | Installing for GRP Pipe Line 600 mm - (RD-A-1 /5)-Z6-A015-ST | 2d | 2026-08-09 A | 2026-08-10 A | RHD4CZ6A015ST1202, RHD4CZ6A015ST1303, RHD4PRSHLSTAGST1005, RHD4PRSHLDOSST1605, RHD4PRSHLPOST1000, RHD4PRSHLDOSST1005 | 100% |  |
| RHD4CZ6A015ST1502 |  | Backfilling and warning tape works for GRP Pipe Line 600 mm - (RD-A-1 /5)-Z6-A015-ST | 2d | 2026-08-11 A | 2026-08-12 A | RHD4CZ6A015ST1402, RHD4CZ6A015ST1503 | 100% |  |
| RHD4CZ6A015ST1402 |  | Primary Test for GRP Pipe Line 600 mm - (RD-A-1 /5)-Z6-A015-ST | 2d | 2026-12-27 | 2026-12-28 | RHD4CZ6A015ST1302 |  | -187d |

| ID | WBS | Task | Duration | Start | Finish | Predecessors | Complete | Total float |
| --- | --- | --- | --- | --- | --- | --- | --- | --- |
|  | 4683 | **RHD4-02-002-A015-(ST)-GRP Pipes - 500 mm diameter** |  | 2026-08-04 | 2026-12-28 |  |  |  |
| RHD4CZ6A015ST1101 |  | Excavation works for GRP Pipe Line 500 mm - (RD-A-1 /5)-Z6-A015-ST | 2d | 2026-08-04 A | 2026-08-05 A | RHD4CZ6A015ST1102, RHD4ENSDZ6APPST110 | 100% |  |
| RHD4CZ6A015ST1201 |  | Bedding works for GRP Pipe Line 500 mm - (RD-A-1 /5)-Z6-A015-ST | 2d | 2026-08-06 A | 2026-08-08 A | RHD4CZ6A015ST1101 | 100% |  |
| RHD4CZ6A015ST1301 |  | Installing for GRP Pipe Line 500 mm - (RD-A-1 /5)-Z6-A015-ST | 2d | 2026-08-09 A | 2026-08-10 A | RHD4CZ6A015ST1201, RHD4CZ6A015ST1302, RHD4PRSHLSTAGST1005, RHD4PRSHLDOSST1605, RHD4PRSHLPOST1000, RHD4PRSHLDOSST1005 | 100% |  |
| RHD4CZ6A015ST1501 |  | Backfilling and warning tape works for GRP Pipe Line 500 mm - (RD-A-1 /5)-Z6-A015-ST | 2d | 2026-08-11 A | 2026-08-12 A | RHD4CZ6A015ST1401, RHD4CZ6A015ST1502 | 100% |  |
| RHD4CZ6A015ST1401 |  | Primary Test for GRP Pipe Line 500 mm - (RD-A-1 /5)-Z6-A015-ST | 2d | 2026-12-27 | 2026-12-28 | RHD4CZ6A015ST1301 |  | -187d |
|  | 4682 | **RHD4-02-002-A015-(ST)-GRP Pipes - 400 mm diameter** |  | 2026-08-04 | 2027-01-16 |  |  |  |
| RHD4CZ6A015ST1100 |  | Excavation works for GRP Pipe Line 400 mm - (RD-A-1 /5)-Z6-A015-ST | 4d | 2026-08-04 A | 2026-12-30 | RHD4CZ6A015ST1101, RHD4ENSDZ6APPST110 | 84% | -194d |
| RHD4CZ6A015ST1200 |  | Bedding works for GRP Pipe Line 400 mm - (RD-A-1 /5)-Z6-A015-ST | 3d | 2026-08-06 A | 2027-01-03 | RHD4CZ6A015ST1100 | 86% | -194d |
| RHD4CZ6A015ST1300 |  | Installing for GRP Pipe Line 400 mm - (RD-A-1 /5)-Z6-A015-ST | 5d | 2026-08-08 A | 2027-01-09 | RHD4CZ6A015ST1200, RHD4CZ6A015ST1301, RHD4PRSHLSTAGST1005, RHD4PRSHLDOSST1605, RHD4PRSHLPOST1000, RHD4PRSHLDOSST1005 | 86% | -194d |
| RHD4CZ6A015ST1500 |  | Backfilling and warning tape works for GRP Pipe Line 400 mm - (RD-A-1 /5)-Z6-A015-ST | 4d | 2026-08-10 A | 2027-01-16 | RHD4CZ6A015ST1400 | 71% | -194d |
| RHD4CZ6A015ST1400 |  | Primary Test for GRP Pipe Line 400 mm - (RD-A-1 /5)-Z6-A015-ST | 2d | 2027-01-10 | 2027-01-11 | RHD4CZ6A015ST1300 |  | -194d |
|  | 4697 | **RHD4-02-002-A015-(ST)-UPVC Pipes - 400 mm diameter** |  |  |  |  |  |  |
|  | 4696 | **RHD4-02-002-A015-(ST)-UPVC Pipes - 300 mm diameter** |  | 2026-08-04 | 2026-12-30 |  |  |  |
| RHD4CZ6A015ST2100 |  | Excavation works for UPVC Pipe Line 300 mm - (RD-A-1 /5)-Z6-A015-ST | 3d | 2026-08-04 A | 2026-08-06 A | RHD4CZ6A015ST3300, RHD4CZ6A015ST3301, RHD4ENSDZ6APPST110, RHD4CZ6A015ST1501 | 100% |  |
| RHD4CZ6A015ST2200 |  | Bedding works for UPVC Pipe Line 300 mm - (RD-A-1 /5)-Z6-A015-ST | 3d | 2026-08-08 A | 2026-08-10 A | RHD4CZ6A015ST2100 | 100% |  |
| RHD4CZ6A015ST2300 |  | Installing for UPVC Pipe Line 300 mm - (RD-A-1 /5)-Z6-A015-ST | 3d | 2026-08-11 A | 2026-08-13 A | RHD4CZ6A015ST2200, RHD4PRSHLDOSST1105, RHD4PRSHLSTAGST1105 | 100% |  |
| RHD4CZ6A015ST2500 |  | Backfilling and warning tape works for UPVC Pipe Line 300 mm - (RD-A-1 /5)-Z6-A015-ST | 4d | 2026-09-06 A | 2026-09-09 A | RHD4CZ6A015ST2400, RHD4CZ6A015ST6100 | 100% |  |
| RHD4CZ6A015ST2400 |  | Primary Test for UPVC Pipe Line 300 mm - (RD-A-1 /5)-Z6-A015-ST | 2d | 2026-12-29 | 2026-12-30 | RHD4CZ6A015ST2300 |  | -187d |
|  | 4704 | **RHD4-02-002-A015-(ST)-Concrete Encasement** |  | 2026-09-05 | 2026-12-30 |  |  |  |
| RHD4CZ6A015ST6100 |  | Pipe Encasement for Storm Pipelines - (RD-A-1 /5)-Z6-A015-ST | 2d | 2026-09-05 A | 2026-12-30 | RHD4CZ6A015ST2300 SS, RHD4CZ6A015ST2300 FF, RHD4CZ6A015ST2200 | 50% | -187d |
|  | 4705 | **RHD4-02-002-Z6-A015-Catch Basin - ST** |  | 2026-08-04 | 2027-05-12 |  |  |  |
|  | 4706 | **RHD4-02-002-A015-(ST)-Single Catch Basin Works** |  | 2026-08-04 | 2027-05-12 |  |  |  |
| RHD4CZ6A015ST7100 |  | Excavation works for Single Catch Basin - (RD-A-1 /5)-Z6-A015-ST | 3d | 2026-08-04 A | 2026-08-08 A | RHD4CZ6A015ST3300, RHD4CZ6A015ST3301, RHD4ENSDZ6APPST110 | 100% |  |
| RHD4CZ6A015ST7200 |  | PC Blinding, Installation and Pipe connection for Single Catch Basin - (RD-A-1 /5)-Z6-A015-ST | 3d | 2026-08-06 A | 2026-08-09 A | RHD4CZ6A015ST7100 | 100% |  |
| RHD4CZ6A015ST7300 |  | Rings & C.Slab & Final Backfill for Single Catch Basin - (RD-A-1 /5)-Z6-A015-ST | 4d | 2026-09-05 A | 2026-09-08 A | RHD4CZ6A015ST7200, RHD4PRSHLDOSST1305, RHD4PRSHLSTAGST1305 | 100% |  |
| RHD4CZ6A015ST7400 |  | Steel Cover for Single Catch Basin - (RD-A-1 /5)-Z6-A015-ST | 3d | 2027-04-07 | 2027-04-11 | RHD4CZ6A015ST7300, RHD4PRSHLDOSST1705, RHD4CZ6A015IRR2202 |  | -110.02d |
| RHD4CZ6A015ST7500 |  | Finishing and Insulation works for Single Catch Basin - (RD-A-1 /5)-Z6-A015-ST | 6d | 2027-05-06 | 2027-05-12 | RHD4CZ6A015ST7400, RHD4CZ6C062MV3401 |  | -132d |
|  | 4707 | **RHD4-02-002-A015-(ST)-Double Catch Basin Works** |  |  |  |  |  |  |
|  | 4299 | **RHD4-02-002-Z6-A015-Concrete Box Culvert - ST** |  | 2026-06-11 | 2027-01-25 |  |  |  |
|  | 4300 | **RHD4-02-002-A015-(ST)-Concrete Box Culvert** |  | 2026-06-11 | 2026-09-22 |  |  |  |
| RHD4CZ6A015ST4100 |  | Excavation works for Box Culvert - (RD-A-1/5)-Z6-A015-ST(Completed) | 7d | 2026-06-11 A | 2026-08-03 A | RHD4CZ6A015ST1500 | 100% |  |
| RHD4CZ6A015ST4200 |  | PC works for Box Culvert - (RD-A-1/5)-Z6-A015-ST(Completed) | 7d | 2026-06-15 A | 2026-08-03 A | RHD4CZ6A015ST4100 | 100% |  |
| RHD4CZ6A015ST4400 |  | Raft works for Box Culvert - (RD-A-1/5)-Z6-A015-ST(Completed) | 15d | 2026-07-11 A | 2026-08-03 A | RHD4CZ6A015ST4200 SS | 100% |  |
| RHD4CZ6A015ST4500 |  | Wall and slab works for Box Culvert - (RD-A-1/5)-Z6-A015-ST | 6d | 2026-08-04 A | 2026-09-21 A | RHD4CZ6A015ST4400, RHD4CZ6A015ST4200, RHD4CZ6A015ST4100 | 100% |  |
| RHD4CZ6A015ST4600 |  | Insulation and Testing for Box Culvert - (RD-A-1/5)-Z6-A015-ST | 5d | 2026-09-19 A | 2026-09-21 A | RHD4CZ6A015ST4700, RHD4CZ6A015ST5400 | 100% |  |
| RHD4CZ6A015ST4700 |  | Backfilling works for Box Culvert - (RD-A-1/5)-Z6-A015-ST | 2d | 2026-09-21 A | 2026-09-22 A | RHD4CZ6A015ST4500, RHD4CZ6A015ST5300 | 100% |  |
|  | 4301 | **RHD4-02-002-A015-(ST)-Concrete Chambers** |  | 2026-08-20 | 2027-01-25 |  |  |  |
| RHD4CZ6A015ST5100 |  | Excavation and Bedding for Concrete Chambers - for Box Culvert - (RD-A-1/5)-Z6-A015-ST | 2d | 2026-08-20 A | 2027-01-18 | RHD4CZ6A015ST4500 | 50% | -150d |
| RHD4CZ6A015ST5200 |  | PC works for Concrete Chambers - for Box Culvert - (RD-A-1/5)-Z6-A015-ST | 2d | 2026-08-25 A | 2027-01-20 | RHD4CZ6A015ST5100 | 50% | -150d |
| RHD4CZ6A015ST5300 |  | Installation for Concrete Chambers - for Box Culvert - (RD-A-1/5)-Z6-A015-ST | 2d | 2026-08-30 A | 2027-01-23 | RHD4CZ6A015ST5200 | 50% | -150d |
| RHD4CZ6A015ST5400 |  | Backfilling works for Concrete Chambers - for Box Culvert - (RD-A-1/5)-Z6-A015-ST | 2d | 2027-01-24 | 2027-01-25 | RHD4CZ6A015ST5300 |  | -150d |
|  | 4767 | **RHD4-02-002-Z6-A015-Potable Network - PT** |  | 2026-12-31 | 2027-03-28 |  |  |  |
|  | 1745 | **RHD4-02-002-C011-(PT)-HDPE Pipes - 450 mm diameter** |  | 2026-12-31 | 2027-01-21 |  |  |  |
| RHD4CZ6A015PT1104 |  | Excavation works for HDPE Pipline 450 mm - (RD-A-1 /5)-Z6-A015-PT | 4d | 2026-12-31 | 2027-01-04 | RHD4CZ6A015ST2500 |  | -187d |
| RHD4CZ6A015PT1204 |  | Bedding works for HDPE Pipline 450 mm - (RD-A-1 /5)-Z6-A015-PT | 3d | 2027-01-05 | 2027-01-07 | RHD4CZ6A015PT1104 |  | -187d |
| RHD4CZ6A015PT1304 |  | Installing for HDPE Pipline 450 mm - (RD-A-1 /5)-Z6-A015-PT | 5d | 2027-01-09 | 2027-01-14 | RHD4CZ6A015PT1204 |  | -187d |
| RHD4CZ6A015PT1404 |  | Primary Test for HDPE Pipline 450 mm - (RD-A-1 /5)-Z6-A015-PT | 2d | 2027-01-14 | 2027-01-17 | RHD4CZ6A015PT1304 |  | -187d |
| RHD4CZ6A015PT1504 |  | Backfilling and warning tape works for HDPE Pipline 450 mm - (RD-A-1 /5)-Z6-A015-PT | 4d | 2027-01-17 | 2027-01-21 | RHD4CZ6A015PT1404 |  | -187d |
|  | 4770 | **RHD4-02-002-A015-(PT)-HDPE Pipes - 200 mm diameter** |  | 2027-02-24 | 2027-03-16 |  |  |  |
| RHD4CZ6A015PT1102 |  | Excavation works for HDPE Pipline 200 mm - (RD-A-1 /5)-Z6-A015-PT | 3d | 2027-02-24 | 2027-02-28 | RHD4ENSDZ6APPPT130, RHD4ENMSPT2000, RHD4CZ6A015ST1500, RHD4ENMSEW2000, RHD4ENMSEW2010, RHD4ENSDZ6APPEW100 SS, RHD4CZ6B17EX1001 |  | -147.04d |
| RHD4CZ6A015PT1202 |  | Bedding works for HDPE Pipline 200 mm - (RD-A-1 /5)-Z6-A015-PT | 2d | 2027-02-28 | 2027-03-02 | RHD4CZ6A015PT1102 |  | -147.04d |
| RHD4CZ6A015PT1302 |  | Installing for HDPE Pipline 200 mm - (RD-A-1 /5)-Z6-A015-PT | 4d | 2027-03-02 | 2027-03-07 | RHD4CZ6A015PT1202, RHD4PRSHLDOSPT1000, RHD4PRSHLSTAGPT1000 |  | -147.04d |
| RHD4CZ6A015PT1402 |  | Primary Test for HDPE Pipline 200 mm - (RD-A-1 /5)-Z6-A015-PT | 2d | 2027-03-07 | 2027-03-13 | RHD4CZ6A015PT1302 |  | -147.02d |
| RHD4CZ6A015PT1502 |  | Backfilling and warning tape works for HDPE Pipline 200 mm - (RD-A-1 /5)-Z6-A015-PT | 3d | 2027-03-13 | 2027-03-16 | RHD4CZ6A015PT1402, RHD4CZ6A015PT5100 |  | -147.04d |
|  | 4776 | **RHD4-02-002-A015-(PT)-Wash out Valve Chambers** |  | 2027-03-16 | 2027-03-25 |  |  |  |
| RHD4CZ6A015PT2101 |  | Excavation and Bedding for Wash out Valve Chambers for Potable Water Network - (RD-A-1 /5)-Z6-A015-PT | 2d | 2027-03-16 | 2027-03-18 | RHD4CZ6A015PT1502, RHD4ENSDZ6APPPT130 |  | -106.04d |
| RHD4CZ6A015PT2201 |  | PC works for Wash out Valve Chambers for Potable Water Network - (RD-A-1 /5)-Z6-A015-PT | 2d | 2027-03-18 | 2027-03-21 | RHD4CZ6A015PT2101 |  | -106.04d |
| RHD4CZ6A015PT2301 |  | Installation for Wash out Valve Chambers for Potable Water Network - (RD-A-1 /5)-Z6-A015-PT | 2d | 2027-03-21 | 2027-03-23 | RHD4CZ6A015PT2201, RHD4PRSHLDOSPT1100, RHD4PRSHLDOSPT1400, RHD4PRSHLSTAGPT1100, RHD4PRSHLSTAGPT1400 |  | -106.04d |
| RHD4CZ6A015PT2401 |  | Backfilling works for Wash out Valve Chambers for Potable Water Network - (RD-A-1 /5)-Z6-A015-PT | 2d | 2027-03-23 | 2027-03-25 | RHD4CZ6A015PT2301 |  | -106.04d |
|  | 4777 | **RHD4-02-002-A015-(PT)-Wash out Valves** |  | 2027-03-23 | 2027-03-28 |  |  |  |
| RHD4CZ6A015PT3102 |  | Installation for Wash out Valves for Potable Water Network - (RD-A-1 /5)-Z6-A015-PT | 2d | 2027-03-23 | 2027-03-25 | RHD4CZ6A015PT2301, RHD4PRSHLDOSPT1200, RHD4PRSHLSTAGPT1200 |  | -106.04d |
| RHD4CZ6A015PT3202 |  | Stem and Service box for Wash out Valves for Potable Water Network - (RD-A-1 /5)-Z6-A015-PT | 2d | 2027-03-25 | 2027-03-28 | RHD4CZ6A015PT3102, RHD4CZ6A015PT2401, RHD4PRSHLDOSPT1300, RHD4PRSHLSTAGPT1300 |  | -106.04d |
|  | 4780 | **RHD4-02-002-A015-(PT)-Fire Hydrant** |  | 2027-03-16 | 2027-03-28 |  |  |  |
| RHD4CZ6A015PT4100 |  | Excavation and Bedding and Pipe Installation for Fire Hydrant - (RD-A-1 /5)-Z6-A015-PT | 2d | 2027-03-16 | 2027-03-18 | RHD4CZ6A015PT1502, RHD4ENSDZ6APPPT130 |  | -147.04d |
| RHD4CZ6A015PT4200 |  | Valve Installation for Fire Hydrant - (RD-A-1 /5)-Z6-A015-PT | 2d | 2027-03-18 | 2027-03-21 | RHD4CZ6A015PT4100 |  | -147.04d |
| RHD4CZ6A015PT4300 |  | Stem for Fire Hydrant - (RD-A-1 /5)-Z6-A015-PT | 2d | 2027-03-21 | 2027-03-23 | RHD4CZ6A015PT4200 |  | -147.04d |
| RHD4CZ6A015PT4400 |  | Fire Installation for Fire Hydrant - (RD-A-1 /5)-Z6-A015-PT | 2d | 2027-03-23 | 2027-03-25 | RHD4CZ6A015PT4300, RHD4PRSHLDOSPT1500, RHD4PRSHLSTAGPT1500 |  | -106.04d |
| RHD4CZ6A015PT4500 |  | Protection Barriers for Fire Hydrant - (RD-A-1 /5)-Z6-A015-PT | 2d | 2027-03-25 | 2027-03-28 | RHD4CZ6A015PT4400 |  | -106.04d |
|  | 4781 | **RHD4-02-002-A015-(PT)-Concrete Encasement** |  | 2027-03-07 | 2027-03-13 |  |  |  |

| ID | WBS | Task | Duration | Start | Finish | Predecessors | Complete | Total float |
| --- | --- | --- | --- | --- | --- | --- | --- | --- |
| RHD4CZ6A015PT5100 |  | Pipe Encasement for Potable Pipelines - (RD-A-1 /5)-Z6-A015-PT | 2.02d | 2027-03-07 | 2027-03-13 | RHD4CZ6A015PT1302 |  | -147.04d |
|  | 4773 | **RHD4-02-002-A015-(PT)-Gate Valves (Direct Buried)** |  | 2027-03-04 | 2027-03-18 |  |  |  |
| RHD4CZ6A015PT3100 |  | Installation for Direct Buried Gate Valves - (RD-A-1 /5)-Z6-A015-PT | 2d | 2027-03-04 | 2027-03-07 | RHD4CZ6A015PT1302 FF, RHD4CZ6A015PT1302 SS, RHD4PRSHLDOSPT1200, RHD4PRSHLSTAGPT1200 |  | -93.02d |
| RHD4CZ6A015PT3200 |  | Stem and Service box for Direct Buried Gate Valves - (RD-A-1 /5)-Z6-A015-PT | 2d | 2027-03-16 | 2027-03-18 | RHD4CZ6A015PT3100, RHD4CZ6A015PT1502, RHD4PRSHLDOSPT1300, RHD4PRSHLSTAGPT1300, RHD4CZ6A015PT1504 |  | -98.04d |
|  | 4782 | **RHD4-02-002-Z6-A015-Irrigation Network - IRR** |  | 2026-08-04 | 2027-04-14 |  |  |  |
|  | 4783 | **RHD4-02-002-A015-(IRR)-HDPE Pipes - 160 mm diameter** |  | 2026-08-04 | 2027-04-03 |  |  |  |
| RHD4CZ6A015IRR1100 |  | Excavation works for HDPE Pipline 160 mm - (RD-A-1 /5)-Z6-A015-IRR | 7d | 2026-08-04 A | 2027-03-08 | RHD4ENSDZ6APPIRR140, RHD4ENMSRR2000, RHD4CZ6A015PT1102 | 14% | -146.02d |
| RHD4CZ6A015IRR1200 |  | Bedding works for HDPE Pipline 160 mm - (RD-A-1 /5)-Z6-A015-IRR | 5d | 2026-08-06 A | 2027-03-17 | RHD4CZ6A015IRR1100 | 13% | -112.02d |
| RHD4CZ6A015IRR1300 |  | Installing for HDPE Pipline 160 mm - (RD-A-1 /5)-Z6-A015-IRR | 7d | 2026-08-08 A | 2027-03-25 | RHD4CZ6A015IRR1200, RHD4PRSHLDOSIRR1000, RHD4PRSHLSTAGIRR1000 | 13% | -112.02d |
| RHD4CZ6A015IRR1400 |  | Primary Test for HDPE Pipline 160 mm - (RD-A-1 /5)-Z6-A015-IRR | 2d | 2027-03-25 | 2027-03-28 | RHD4CZ6A015IRR1300, RHD4CZ6A015IRR3100 |  | -112.02d |
| RHD4CZ6A015IRR1500 |  | Backfilling and warning tape works for HDPE Pipline 160 mm - (RD-A-1 /5)-Z6-A015-IRR | 5d | 2027-03-28 | 2027-04-03 | RHD4CZ6A015IRR1400 |  | -112.02d |
|  | 4791 | **RHD4-02-002-A015-(IRR)-Gate Valves (Direct Buried)** |  | 2027-03-22 | 2027-04-06 |  |  |  |
| RHD4CZ6A015IRR3100 |  | Installation for Direct Buried Gate Valves - (RD-A-1 /5)-Z6-A015-IRR | 3d | 2027-03-22 | 2027-03-25 | RHD4CZ6A015IRR1300 SS, RHD4CZ6A015IRR1300 FF, RHD4PRSHLDOSIRR1100, RHD4PRSHLSTAGIRR1100 |  | -112.02d |
| RHD4CZ6A015IRR3200 |  | Stem and Service box for Direct Buried Gate Valves - (RD-A-1 /5)-Z6-A015-IRR | 3d | 2027-04-03 | 2027-04-06 | RHD4CZ6A015IRR3100, RHD4CZ6A015IRR1500, RHD4PRSHLDOSIRR1300, RHD4PRSHLSTAGIRR1300 |  | -107.02d |
|  | 4794 | **RHD4-02-002-A015-(IRR)-Wash out Chamber** |  | 2027-04-03 | 2027-04-12 |  |  |  |
| RHD4CZ6A015IRR2101 |  | Excavation and Bedding for Wash out Chamber for Irrigation Network - (RD-A-1 /5)-Z6-A015-IRR | 2d | 2027-04-03 | 2027-04-05 | RHD4CZ6A015IRR1500, RHD4ENSDZ6APPIRR140 |  | -112.02d |
| RHD4CZ6A015IRR2201 |  | PC works for Wash out Chamber for Irrigation Network - (RD-A-1 /5)-Z6-A015-IRR | 2d | 2027-04-05 | 2027-04-07 | RHD4CZ6A015IRR2101 |  | -112.02d |
| RHD4CZ6A015IRR2301 |  | Installation for Wash out Chamber for Irrigation Network - (RD-A-1 /5)-Z6-A015-IRR | 2d | 2027-04-07 | 2027-04-10 | RHD4CZ6A015IRR2201, RHD4PRSHLDOSIRR1200, RHD4PRSHLDOSIRR1400, RHD4PRSHLSTAGIRR1200, RHD4PRSHLSTAGIRR1400 |  | -112.02d |
| RHD4CZ6A015IRR2401 |  | Backfilling works for Wash out Chamber for Irrigation Network - (RD-A-1 /5)-Z6-A015-IRR | 2d | 2027-04-10 | 2027-04-12 | RHD4CZ6A015IRR2301 |  | -112.02d |
|  | 4795 | **RHD4-02-002-A015-(IRR)-Wash out Valves** |  | 2027-04-10 | 2027-04-14 |  |  |  |
| RHD4CZ6A015IRR3102 |  | Installation for Wash out Valve for Irrigation Network - (RD-A-1 /5)-Z6-A015-IRR | 2d | 2027-04-10 | 2027-04-12 | RHD4CZ6A015IRR2301, RHD4PRSHLDOSIRR1100, RHD4PRSHLSTAGIRR1100 |  | -112.02d |
| RHD4CZ6A015IRR3202 |  | Stem and Service box for Wash out Valve for Irrigation Network - (RD-A-1 /5)-Z6-A015-IRR | 2d | 2027-04-12 | 2027-04-14 | RHD4CZ6A015IRR3102, RHD4CZ6A015IRR2401, RHD4PRSHLDOSIRR1300, RHD4PRSHLSTAGIRR1300, RHD4CZ6A015IRR3200 |  | -112.02d |
|  | 4796 | **RHD4-02-002-A015-(IRR)-Air Valve Chamber** |  | 2027-04-03 | 2027-04-12 |  |  |  |
| RHD4CZ6A015IRR2102 |  | Excavation and Bedding for Valve Chamber for Irrigation Network - (RD-A-1 /5)-Z6-A015-IRR | 2d | 2027-04-03 | 2027-04-05 | RHD4CZ6A015IRR1500, RHD4ENSDZ6APPIRR140 |  | -110.02d |
| RHD4CZ6A015IRR2202 |  | PC works for Valve Chamber for Irrigation Network - (RD-A-1 /5)-Z6-A015-IRR | 2d | 2027-04-05 | 2027-04-07 | RHD4CZ6A015IRR2102 |  | -110.02d |
| RHD4CZ6A015IRR2302 |  | Installation for Valve Chamber for Irrigation Network - (RD-A-1 /5)-Z6-A015-IRR | 2d | 2027-04-07 | 2027-04-10 | RHD4CZ6A015IRR2202, RHD4PRSHLDOSIRR1200, RHD4PRSHLDOSIRR1400, RHD4PRSHLSTAGIRR1200, RHD4PRSHLSTAGIRR1400 |  | -110.02d |
| RHD4CZ6A015IRR2402 |  | Backfilling works for Valve Chamber for Irrigation Network - (RD-A-1 /5)-Z6-A015-IRR | 2d | 2027-04-10 | 2027-04-12 | RHD4CZ6A015IRR2302 |  | -110.02d |
|  | 4797 | **RHD4-02-002-A015-(IRR)-Air Valves** |  | 2027-04-10 | 2027-04-14 |  |  |  |
| RHD4CZ6A015IRR3103 |  | Installation for Air Valves for Irrigation Network - (RD-A-1 /5)-Z6-A015-IRR | 2d | 2027-04-10 | 2027-04-12 | RHD4CZ6A015IRR2302, RHD4PRSHLDOSIRR1100, RHD4PRSHLSTAGIRR1100 |  | -110.02d |
| RHD4CZ6A015IRR3203 |  | Stem and Service box for Air Valves for Irrigation Network - (RD-A-1 /5)-Z6-A015-IRR | 2d | 2027-04-12 | 2027-04-14 | RHD4CZ6A015IRR3103, RHD4CZ6A015IRR2402, RHD4PRSHLDOSIRR1300, RHD4PRSHLSTAGIRR1300 |  | -110.02d |
|  | 4798 | **RHD4-02-002-A015-(IRR)-Concrete Encasement** |  |  |  |  |  |  |
|  | 4816 | **RHD4-02-002-Z6-A015-Medium Voltage Network - MV** |  |  |  |  |  |  |
|  | 4817 | **RHD4-02-002-A015-(MV)-Medium Voltage cable trench** |  |  |  |  |  |  |
|  | 4819 | **RHD4-02-002-A015-(MV)-Medium Voltage cables 3Cx 500 mm²** |  |  |  |  |  |  |
|  | 4823 | **RHD4-02-002-Z6-A015-Low Voltage Network - LV** |  | 2027-09-15 | 2027-10-09 |  |  |  |
|  | 4826 | **RHD4-02-002-A015-(LV)-Low Voltage cables** |  | 2027-09-15 | 2027-10-09 |  |  |  |
| RHD4CZ6A015LV3100 |  | Excavation for Low Voltage Cables for Low Voltage Network - (RD-A-1 /5)-Z6-A015-LV | 6d | 2027-09-15 | 2027-09-22 | RHD4ENSDZ6APPLV160, RHD4CZ6C062LV3400, RHD4CZ6A015RD3100 |  | -192.02d |
| RHD4CZ6A015LV3200 |  | Cable Laying of Low Voltage Cables for Low Voltage Network - (RD-A-1 /5)-Z6-A015-LV | 5d | 2027-09-22 | 2027-09-29 | RHD4CZ6A015LV3100, RHD4PRSHLDOSLV1100, RHD4ENMSLV2000, RHD4ENMSLV2010, RHD4PRSHLSTAGLV1100 |  | -192.02d |
| RHD4CZ6A015LV3300 |  | Warning tape and Backfill for Low Voltage Cables for Low Voltage Network - (RD-A-1 /5)-Z6-A015-LV | 5d | 2027-09-29 | 2027-10-05 | RHD4CZ6A015LV3200 |  | -192.02d |
| RHD4CZ6A015LV3400 |  | Testing of Low Voltage Cables for Low Voltage Network - (RD-A-1 /5)-Z6-A015-LV | 3d | 2027-10-05 | 2027-10-09 | RHD4CZ6A015LV3300 |  | -192.02d |
|  | 4829 | **RHD4-02-002-Z6-A015-Street Lighting Network - SL** |  | 2027-10-09 | 2027-11-06 |  |  |  |
|  | 4832 | **RHD4-02-002-A015-(SL)-Street Lighting cables** |  | 2027-10-09 | 2027-10-21 |  |  |  |
| RHD4CZ6A015SL3100 |  | Excavation for Street Lighting Cables for Street Lighting Network - (RD-A-1 /5)-Z6-A015-SL | 3d | 2027-10-09 | 2027-10-12 | RHD4ENSDZ6APPSL170, RHD4CZ6A015LV3400 |  | -192.02d |
| RHD4CZ6A015SL3200 |  | Cable Laying of Street Lighting Cables for Street Lighting Network - (RD-A-1 /5)-Z6-A015-SL | 3d | 2027-10-12 | 2027-10-16 | RHD4CZ6A015SL3100, RHD4PRSHLDOSSL1100, RHD4ENMSSL2000, RHD4ENMSSL2010, RHD4PRSHLSTAGSL1100 |  | -192.02d |
| RHD4CZ6A015SL3300 |  | Warning tape and Backfill for Street Lighting Cables for Street Lighting Network - (RD-A-1 /5)-Z6-A015-SL | 3d | 2027-10-16 | 2027-10-19 | RHD4CZ6A015SL3200 |  | -192.02d |
| RHD4CZ6A015SL3400 |  | Testing of Street Lighting Cables for Street Lighting Network - (RD-A-1 /5)-Z6-A015-SL | 2d | 2027-10-19 | 2027-10-21 | RHD4CZ6A015SL3300 |  | -192.02d |
|  | 4833 | **RHD4-02-002-A015-(SL)-Street Lighting Poles** |  | 2027-10-21 | 2027-11-06 |  |  |  |
| RHD4CZ6A015SL1100 |  | Excavation for RC Base for Lighting Poles for Street Lighting Network - (RD-A-1 /5)-Z6-A015-SL | 2d | 2027-10-21 | 2027-10-24 | RHD4ENSDZ6APPSL170, RHD4CZ6A015SL3400 |  | -192.02d |
| RHD4CZ6A015SL1200 |  | Installation for RC Base for Lighting Poles for Street Lighting Network - (RD-A-1 /5)-Z6-A015-SL | 2d | 2027-10-24 | 2027-10-26 | RHD4CZ6A015SL1100 |  | -192.02d |
| RHD4CZ6A015SL1300 |  | Backfill for RC Base for Lighting Poles for Street Lighting Network - (RD-A-1 /5)-Z6-A015-SL | 2d | 2027-10-26 | 2027-10-28 | RHD4CZ6A015SL1200 |  | -192.02d |
| RHD4CZ6A015SL1400 |  | Installation for Lighting Poles for Street Lighting Network - (RD-A-1 /5)-Z6-A015-SL | 2d | 2027-10-28 | 2027-10-31 | RHD4CZ6A015SL1300, RHD4CZ6A015SL3400, RHD4PRSHLDOSSL1200, RHD4ENMSSL2000, RHD4ENMSSL2010, RHD4PRSHLSTAGSL1200 |  | -192.02d |
| RHD4CZ6A015SL1500 |  | Luminaire Installation for Lighting Poles for Street Lighting Network - (RD-A-1 /5)-Z6-A015-SL | 3d | 2027-11-02 | 2027-11-06 | RHD4CZ6A015SL1400, RHD4CZ6A015SL6100, RHD4PRSHLDOSSL1300, RHD4PRSHLSTAGSL1300 |  | -192.02d |
|  | 4835 | **RHD4-02-002-A015-(SL)-Street Lighting Earthing System** |  | 2027-10-31 | 2027-11-02 |  |  |  |
| RHD4CZ6A015SL6100 |  | Installation of Earthing for Lighting Poles and Fedder Pillers for Street Lighting Network - (RD-A-1 /5)-Z6-A015-SL | 2d | 2027-10-31 | 2027-11-02 | RHD4CZ6A015SL1400, RHD4ENMSER2000, RHD4ENMSER2010 |  | -192.02d |
|  | 4841 | **RHD4-02-002-Z6-A015-Telecommunications Network - TC** |  | 2026-12-27 | 2027-11-30 |  |  |  |
|  | 4842 | **RHD4-02-002-A015-(TC)-Telecommunications Ducts** |  | 2027-11-06 | 2027-11-30 |  |  |  |
| RHD4CZ6A015TC2100 |  | Excavation of HDPE Ducts for Telecom Network - (RD-A-1 /5)-Z6-A015-TC | 6d | 2027-11-06 | 2027-11-13 | RHD4ENSDZ6APPTC190, RHD4CZ6A015SL1500 |  | -192.02d |
| RHD4CZ6A015TC2200 |  | Installation of HDPE Ducts for Telecom Network - (RD-A-1 /5)-Z6-A015-TC | 9d | 2027-11-13 | 2027-11-23 | RHD4CZ6A015TC2100, RHD4PRSHLDOSTC1000, RHD4PRSHLSTAGTC1000 |  | -192.02d |
| RHD4CZ6A015TC2400 |  | Backfilling of HDPE Ducts for Telecom Network - (RD-A-1 /5)-Z6-A015-TC | 6d | 2027-11-23 | 2027-11-30 | RHD4CZ6A015TC2200, RHD4CZ6A015TC5200 |  | -192.02d |
|  | 4843 | **RHD4-02-002-A015-(TC)-Telecommunications Manholes** |  | 2027-11-13 | 2027-11-20 |  |  |  |
| RHD4CZ6A015TC5100 |  | Excavation for Manholes for Telecom Network - (RD-A-1 /5)-Z6-A015-TC | 3d | 2027-11-13 | 2027-11-16 | RHD4CZ6A015TC2100, RHD4ENSDZ6APPTC190 |  | -189.02d |
| RHD4CZ6A015TC5200 |  | Installation of Manholes for Telecom Network - (RD-A-1 /5)-Z6-A015-TC | 3d | 2027-11-16 | 2027-11-20 | RHD4CZ6A015TC5100, RHD4CZ6A015TC2200 SS, RHD4PRSHLDOSTC1200, RHD4PRSHLSTAGTC1200 |  | -189.02d |
|  | 5411 | **RHD4-02-002-A015-(TC)-Telecomminications Road Crossings** |  | 2026-12-27 | 2027-01-05 |  |  |  |
| RHD4CZ6A015TC3100 |  | Excavation for Road Crossings for Telecom Network - (RD-A-1 /5)-Z6-A015-TC | 2d | 2026-12-27 | 2026-12-28 | RHD4CZ6A015ST3301 |  | -194.02d |
| RHD4CZ6A015TC3200 |  | Installation of Road Crossings for Telecom Network - (RD-A-1 /5)-Z6-A015-TC | 2.01d | 2026-12-29 | 2026-12-31 | RHD4CZ6A015TC3100 |  | -194.02d |
| RHD4CZ6A015TC3300 |  | Pouring of Road Crossings for Telecom Network - (RD-A-1 /5)-Z6-A015-TC | 2.01d | 2026-12-31 | 2027-01-03 | RHD4CZ6A015TC3200 |  | -194.02d |
| RHD4CZ6A015TC3400 |  | Backfilling of Road Crossings for Telecom Network - (RD-A-1 /5)-Z6-A015-TC | 2d | 2027-01-03 | 2027-01-05 | RHD4CZ6A015TC3300 |  | -194.02d |
|  | 4845 | **RHD4-02-002-Z6-A015-Information and Communication Technologies - ICT** |  | 2026-05-30 | 2027-12-25 |  |  |  |
|  | 4846 | **RHD4-02-002-A015-(ICT)-Information and Communication Technologies Ducts** |  | 2027-11-30 | 2027-12-25 |  |  |  |
| RHD4CZ6A015ICT2100 |  | Excavation of HDPE Ducts for ICT Network - (RD-A-1 /5)-Z6-A015-ICT | 6d | 2027-11-30 | 2027-12-07 | RHD4ENSDZ6APPICT200, RHD4CZ6A015TC2400 |  | -192.02d |

| ID | WBS | Task | Duration | Start | Finish | Predecessors | Complete | Total float |
| --- | --- | --- | --- | --- | --- | --- | --- | --- |
| RHD4CZ6A015ICT2200 |  | Installation of HDPE Ducts for ICT Network - (RD-A-1 /5)-Z6-A015-ICT | 9d | 2027-12-07 | 2027-12-18 | RHD4CZ6A015ICT2100, RHD4PRSHLDOSICT1000, RHD4PRSHLSTAGICT1000 |  | -192.02d |
| RHD4CZ6A015ICT2400 |  | Backfilling of HDPE Ducts for ICT Network - (RD-A-1 /5)-Z6-A015-ICT | 6d | 2027-12-18 | 2027-12-25 | RHD4CZ6A015ICT2200, RHD4CZ6A015ICT5200 |  | -192.02d |
|  | 4847 | **RHD4-02-002-A015-(ICT)-Information and Communication Technologies Manholes** |  | 2027-12-07 | 2027-12-14 |  |  |  |
| RHD4CZ6A015ICT5100 |  | Excavation for Manholes for ICT Network - (RD-A-1 /5)-Z6-A015-ICT | 3d | 2027-12-07 | 2027-12-11 | RHD4CZ6A015ICT2100, RHD4ENSDZ6APPICT200 |  | -189.02d |
| RHD4CZ6A015ICT5200 |  | Installation of Manholes for ICT Network - (RD-A-1 /5)-Z6-A015-ICT | 3d | 2027-12-11 | 2027-12-14 | RHD4CZ6A015ICT5100, RHD4PRSHLDOSICT1200, RHD4PRSHLSTAGICT1200 |  | -189.02d |
|  | 4848 | **RHD4-02-002-A015-(ICT)-Information and Communication Technologies Road Crossings** |  | 2026-05-30 | 2026-08-12 |  |  |  |
| RHD4CZ6A015ICT3100 |  | Excavation for Road Crossings for ICT Network - (RD-A-1 /5)-Z6-A015-ICT | 2d | 2026-05-30 A | 2026-08-05 A | RHD4ENSDZ6APPICT200, RHD4CZ6A015ST3301 | 100% |  |
| RHD4CZ6A015ICT3200 |  | Installation of Road Crossings for ICT Network - (RD-A-1 /5)-Z6-A015-ICT | 2d | 2026-08-06 A | 2026-08-08 A | RHD4CZ6A015ICT3100, RHD4PRSHLDOSICT1100, RHD4PRSHLSTAGICT1100 | 100% |  |
| RHD4CZ6A015ICT3300 |  | Pouring of Road Crossings for ICT Network - (RD-A-1 /5)-Z6-A015-ICT | 2d | 2026-08-09 A | 2026-08-10 A | RHD4CZ6A015ICT3200 | 100% |  |
| RHD4CZ6A015ICT3400 |  | Backfilling of Road Crossings for ICT Network - (RD-A-1 /5)-Z6-A015-ICT | 2d | 2026-08-11 A | 2026-08-12 A | RHD4CZ6A015ICT3300 | 100% |  |
|  | 4836 | **RHD4-02-002-Z6-A015-Landscape Network - LS** |  |  |  |  |  |  |
|  | 4837 | **RHD4-02-002-A015-(LS)-Landscape Lighting cables** |  |  |  |  |  |  |
|  | 4838 | **RHD4-02-002-A015-(LS)-Landscape Feeder Pillars** |  |  |  |  |  |  |
|  | 4839 | **RHD4-02-002-A015-(LS)-Landscape Bollard Poles** |  |  |  |  |  |  |
|  | 4840 | **RHD4-02-002-A015-(LS)-Landscape Feeder Pillars Earthing** |  |  |  |  |  |  |
|  | 4849 | **RHD4-02-002-Z6-A015-Security Network - CCTV** |  | 2027-12-25 | 2028-01-08 |  |  |  |
|  | 4850 | **RHD4-02-002-A015-(CCTV)-Civil Works** |  |  |  |  |  |  |
|  | 4851 | **RHD4-02-002-A015-(CCTV)-CCTV Poles** |  | 2027-12-25 | 2028-01-03 |  |  |  |
| RHD4CZ6A015CCTV1100 |  | Excavation for RC Base for CCTV Poles for Security Network - (RD-A-1 /5)-Z6-A015-CCTV | 2d | 2027-12-25 | 2027-12-27 | RHD4ENSDZ6APPCCTV210, RHD4CZ6A015ICT2400 |  | -192.02d |
| RHD4CZ6A015CCTV1200 |  | Installation for RC Base for CCTV Poles for Security Network - (RD-A-1 /5)-Z6-A015-CCTV | 2d | 2027-12-27 | 2027-12-29 | RHD4CZ6A015CCTV1100 |  | -192.02d |
| RHD4CZ6A015CCTV1300 |  | Backfill for RC Base for CCTV Poles for Security Network - (RD-A-1 /5)-Z6-A015-CCTV | 2d | 2027-12-29 | 2028-01-01 | RHD4CZ6A015CCTV1200 |  | -192.02d |
| RHD4CZ6A015CCTV1400 |  | Installation for CCTV Poles for Security Network - (RD-A-1 /5)-Z6-A015-CCTV | 2d | 2028-01-01 | 2028-01-03 | RHD4CZ6A015CCTV1300, RHD4PRSHLDOSCCTV1000, RHD4PRSHLSTACCTV1000 |  | -192.02d |
|  | 4852 | **RHD4-02-002-A015-(CCTV)-Camera** |  | 2028-01-03 | 2028-01-05 |  |  |  |
| RHD4CZ6A015CCTV3100 |  | Installation for Cameras for Security Network - (RD-A-1 /5)-Z6-A015-CCTV | 2d | 2028-01-03 | 2028-01-05 | RHD4CZ6A015CCTV1400, RHD4PRSHLDOSCCTV1100, RHD4PRSHLSTACCTV1100 |  | -192.02d |
|  | 4853 | **RHD4-02-002-A015-(CCTV)-Power and Infrastructure** |  |  |  |  |  |  |
|  | 4855 | **RHD4-02-002-A015-(CCTV)-CCTV Panels and Components** |  | 2028-01-05 | 2028-01-08 |  |  |  |
| RHD4CZ6A015CCTV6100 |  | Installation for CCTV Panels for Security Network - (RD-A-1 /5)-Z6-A015-CCTV | 2d | 2028-01-05 | 2028-01-08 | RHD4CZ6A015CCTV3100, RHD4PRSHLDOSCCTV1200, RHD4PRSHLSTACCTV1200, RHD4PRLOLSTACCTV1001 |  | -192.02d |
|  | 4866 | **RHD4-02-002-Z6-C052** |  | 2026-04-15 | 2027-09-08 |  |  |  |
|  | 4897 | **RHD4-02-002-Z6-C052-Crossings Sewage Network - SWCr** |  |  |  |  |  |  |
|  | 4907 | **RHD4-02-002-C052-(SWCr)-MH Works - 1200 mm diameter** |  |  |  |  |  |  |
|  | 4903 | **RHD4-02-002-C052-(SWCr)-UPVC Pipes - 200 mm diameter** |  |  |  |  |  |  |
|  | 4941 | **RHD4-02-002-Z6-C052-Crossings Potable Network - PTCr** |  |  |  |  |  |  |
|  | 4943 | **RHD4-02-002-C052-(PTCr)-HDPE Pipes - 160 mm diameter** |  |  |  |  |  |  |
|  | 4942 | **RHD4-02-002-C052-(PTCr)-HDPE Pipes - 110 mm diameter** |  |  |  |  |  |  |
|  | 4947 | **RHD4-02-002-C052-(PTCr)-Gate Valves (Direct Buried)** |  |  |  |  |  |  |
|  | 4952 | **RHD4-02-002-C052-(PTCr)-Air Valve Chambers** |  |  |  |  |  |  |
|  | 4953 | **RHD4-02-002-C052-(PTCr)-Air Valves** |  |  |  |  |  |  |
|  | 4954 | **RHD4-02-002-C052-(PTCr)-Fire Hydrant** |  |  |  |  |  |  |
|  | 4988 | **RHD4-02-002-Z6-C052-Crossings Irrigation Network - IRRC** |  |  |  |  |  |  |
|  | 4989 | **RHD4-02-002-C052-(IRRC)-HDPE Pipes - 160 mm diameter** |  |  |  |  |  |  |
|  | 4997 | **RHD4-02-002-C052-(IRRC)-Gate Valves (Direct Buried)** |  |  |  |  |  |  |
|  | 5000 | **RHD4-02-002-C052-(IRRC)-Wash out Chamber** |  |  |  |  |  |  |
|  | 5001 | **RHD4-02-002-C052-(IRRC)-Wash out Valves** |  |  |  |  |  |  |
|  | 5045 | **RHD4-02-002-Z6-C052-Road Works - RD** |  | 2026-04-15 | 2027-09-08 |  |  |  |
|  | 5046 | **RHD4-02-002-C052-(RD)-Subgrade** |  | 2026-04-15 | 2026-05-23 |  |  |  |
| RHD4CZ6C052RD1100 |  | Supply, lay and compaction subgrade compacted thickness 300 mm for Roads - (RD-C-5 /2)-Z6-C052-RD | 9d | 2026-04-15 A | 2026-05-23 A | RHD4ENSDZ6APPRD220, RHD4ENSDZ6APPEW100 SS, RHD4CZ6C052ST1502, RHD4CZ6C052ST1503, RHD4CZ6C052ST3301, RHD4CZ6C052ICT3400, RHD4CZ6C052TC3400 | 100% |  |
|  | 5047 | **RHD4-02-002-C052-(RD)-Aggregate Base Course** |  | 2027-02-24 | 2027-02-27 |  |  |  |
| RHD4CZ6C052RD2100 |  | Supply, lay and compaction Aggregate base course compacted thickness 300 mmfor Roads - (RD-C-5 /2)-Z6-C052-RD | 3d | 2027-02-24 | 2027-02-27 | RHD4PRSHLDOSRD1000, RHD4PRSHLSTAGRD1000, RHD4CZ6C052RD1100 |  | -170d |
|  | 5048 | **RHD4-02-002-C052-(RD)-Bituminous base course Two Layers, including (MC1)&(RC2)** |  | 2027-02-28 | 2027-06-27 |  |  |  |
| RHD4CZ6C052RD3100 |  | Supply, lay and Asphaltic base course including Prime Coat (MC1) for 1st Layer - (RD-C-5 /2)-Z6-C052-RD | 2d | 2027-02-28 | 2027-03-01 | RHD4CZ6C052RD2100, RHD4PRSHLDOSRD1100, RHD4ENMSASPH2000, RHD4ENMSASPH2010, RHD4PRSHLSTAGRD1100 |  | -170d |
| RHD4CZ6C052RD3200 |  | Supply, lay and Asphaltic base course including Tack Coat (RC2) for 2nd Layer - (RD-C-5 /2)-Z6-C052-RD | 2d | 2027-06-26 | 2027-06-27 | RHD4PRSHLDOSRD1100, RHD4PRSHLSTAGRD1100, RHD4CZ6C052ICT2400 |  | -95d |
|  | 5050 | **RHD4-02-002-C052-(RD)-Precast Concrete Curb** |  | 2027-08-17 | 2027-08-19 |  |  |  |
| RHD4CZ6C052RD5100 |  | Supply and installation Precast Concrete Kerb for Roads - (RD-C-5 /2)-Z6-C052-RD | 3d | 2027-08-17 | 2027-08-19 | RHD4CZ6C052RD3200, RHD4PRSHLDOSRD1200, RHD4ENMSRD2000, RHD4ENMSRD2010, RHD4PRSHLSTAGRD1200, RHD4CZ6RA01RD5100 |  | -138d |
|  | 5053 | **RHD4-02-002-C052-(RD)-Traffic Signage** |  | 2027-08-29 | 2027-09-04 |  |  |  |
| RHD4CZ6C052RD8100 |  | Installation of Traffic Signage for Road Network - (RD-C-5 /2)-Z6-C052-RD | 6d | 2027-08-29 | 2027-09-04 | RHD4CZ6C052RD5100, RHD4CZ6C052TC2400, RHD4CZ6C052ICT2400, RHD4PRSHLDOSRD1600, RHD4PRSHLSTAGRD1600, RHD4CZ6RA01RD8100 |  | -145d |
|  | 5051 | **RHD4-02-002-C052-(RD)-Precast Interlocking Block Pavers** |  |  |  |  |  |  |
|  | 5049 | **RHD4-02-002-C052-(RD)-Bituminous concrete wearing course including tack coat (RC2)** |  | 2027-08-21 | 2027-08-22 |  |  |  |
| RHD4CZ6C052RD4100 |  | Supply, lay and compaction Asphaltic wearing course including tack Coat (RC2)for Road Network - (RD-C-5 /2)-Z6-C052-RD | 2d | 2027-08-21 | 2027-08-22 | RHD4CZ6C052RD5100 |  | -134d |
|  | 5054 | **RHD4-02-002-C052-(RD)-Speed Table and Wheel Stopper** |  |  |  |  |  |  |
|  | 5052 | **RHD4-02-002-C052-(RD)-Pavement Marking** |  | 2027-09-05 | 2027-09-08 |  |  |  |
| RHD4CZ6C052RD7100 |  | Pavement Markings for Road Network - (RD-C-5 /2)-Z6-C052-RD | 4d | 2027-09-05 | 2027-09-08 | RHD4CZ6C052RD4100, RHD4PRSHLDOSRD1500, RHD4PRSHLSTAGRD1500, RHD4CZ6C052RD8100 |  | -145d |
|  | 4870 | **RHD4-02-002-Z6-C052-Storm Network - ST** |  | 2026-08-04 | 2027-03-04 |  |  |  |
|  | 3739 | **RHD4-02-002-C052-(ST)-GRP Pipes - 700 mm diameter** |  | 2026-08-04 | 2027-01-27 |  |  |  |
| RHD4CZ6C052ST1103 |  | Excavation works for GRP Pipe Line 700 mm - (RD-C-5 /2)-Z6-C052-ST | 2d | 2026-08-04 A | 2026-08-05 A | RHD4ENSDZ5APPST110, RHD4CZ6C062ST1106, RHD4CZ7RA03RA3000 | 100% |  |
| RHD4CZ6C052ST1203 |  | Bedding works for GRP Pipe Line 700 mm - (RD-C-5 /2)-Z6-C052-ST | 2d | 2026-08-06 A | 2026-08-08 A | RHD4CZ6C052ST1103 | 100% |  |
| RHD4CZ6C052ST1303 |  | Installing for GRP Pipe Line 700 mm - (RD-C-5 /2)-Z6-C052-ST | 2d | 2026-08-09 A | 2026-09-20 A | RHD4CZ6C052ST1203 | 100% |  |
| RHD4CZ6C052ST1503 |  | Backfilling and warning tape works for GRP Pipe Line 700 mm - (RD-C-5 /2)-Z6-C052-ST | 2d | 2026-08-11 A | 2026-10-13 A | RHD4CZ6C052ST1403 | 100% |  |
| RHD4CZ6C052ST1403 |  | Primary Test for GRP Pipe Line 700 mm - (RD-C-5 /2)-Z6-C052-ST | 2d | 2027-01-26 | 2027-01-27 | RHD4CZ6C052ST1303 |  | -149d |
|  | 4888 | **RHD4-02-002-C052-(ST)-MH Works - 1500 mm diameter** |  | 2026-08-04 | 2027-02-28 |  |  |  |
| RHD4CZ6C052ST3101 |  | Excavation and PC Blinding works for MH 1500 mm - (RD-C-5 /2)-Z6-C052-ST | 2d | 2026-08-04 A | 2026-08-06 A | RHD4CZ6C052RW3000, RHD4ENSDZ6APPST110, RHD4ENMSST2000, RHD4CZ6C052ST1103 | 100% |  |

| ID | WBS | Task | Duration | Start | Finish | Predecessors | Complete | Total float |
| --- | --- | --- | --- | --- | --- | --- | --- | --- |
| RHD4CZ6C052ST3201 |  | Installation of Base for MH 1500 mm - (RD-C-5 /2)-Z6-C052-ST | 2d | 2026-08-06 A | 2026-08-10 A | RHD4CZ6C052ST3101, RHD4PRSHLSTAGST1605 | 100% |  |
| RHD4CZ6C052ST3301 |  | MH Ring and C.Slab works and Backfilling works for MH 1500 mm - (RD-C-5 /2)-Z6-C052-ST | 2d | 2026-10-01 A | 2027-01-27 | RHD4CZ6C052ST3201, RHD4PRSHLDOSST1605 | 70% | -171d |
| RHD4CZ6C052ST3401 |  | Steel Cover for MH 1500 mm - (RD-C-5 /2)-Z6-C052-ST | 2d | 2027-02-21 | 2027-02-23 | RHD4CZ6C052ST3301, RHD4CZ6C052ST2501, RHD4PRSHLDOSST1705, RHD4PRSHLSTAGST1705 |  | -163d |
| RHD4CZ6C052ST3501 |  | Finishing, Benching, Testing works for MH 1500 mm - (RD-C-5 /2)-Z6-C052-ST | 2d | 2027-02-27 | 2027-02-28 | RHD4CZ6C052ST3401, RHD4CZ6C052ST2500 |  | -161d |
|  | 4887 | **RHD4-02-002-C052-(ST)-MH Works - 1200 mm diameter** |  | 2026-08-04 | 2027-03-04 |  |  |  |
| RHD4CZ6C052ST3100 |  | Excavation and PC Blinding works for MH 1200 mm - (RD-C-5 /2)-Z6-C052-ST | 3d | 2026-08-04 A | 2026-08-06 A | RHD4CZ6C052ST3101, RHD4ENSDZ6APPST110, RHD4ENMSST2000, RHD4ENMSST2010 | 100% |  |
| RHD4CZ6C052ST3200 |  | Installation of Base for MH 1200 mm - (RD-C-5 /2)-Z6-C052-ST | 3d | 2026-08-06 A | 2026-08-12 A | RHD4CZ6C052ST3100, RHD4PRSHLSTAGST1605 | 100% |  |
| RHD4CZ6C052ST3300 |  | MH Ring and C.Slab works and Backfilling works for MH 1200 mm - (RD-C-5 /2)-Z6-C052-ST | 3d | 2026-10-01 A | 2027-01-28 | RHD4CZ6C052ST3200, RHD4PRSHLDOSST1605 | 70% | -172d |
| RHD4CZ6C052ST3400 |  | Steel Cover for MH 1200 mm - (RD-C-5 /2)-Z6-C052-ST | 3d | 2027-02-27 | 2027-03-01 | RHD4CZ6C052ST3300, RHD4CZ6C052ST2501, RHD4CZ6C052ST2500, RHD4PRSHLDOSST1705, RHD4PRSHLSTAGST1705, RHD4CZ6C052ST3401 |  | -165d |
| RHD4CZ6C052ST3500 |  | Finishing, Benching, Testing works for MH 1200 mm - (RD-C-5 /2)-Z6-C052-ST | 3d | 2027-03-02 | 2027-03-04 | RHD4CZ6C052ST3400 |  | -165d |
|  | 4876 | **RHD4-02-002-C052-(ST)-GRP Pipes - 900 mm diameter** |  |  |  |  |  |  |
|  | 4875 | **RHD4-02-002-C052-(ST)-GRP Pipes - 800 mm diameter** |  |  |  |  |  |  |
|  | 4873 | **RHD4-02-002-C052-(ST)-GRP Pipes - 600 mm diameter** |  | 2026-08-04 | 2027-01-27 |  |  |  |
| RHD4CZ6C052ST1102 |  | Excavation works for GRP Pipe Line 600 mm - (RD-C-5 /2)-Z6-C052-ST | 2d | 2026-08-04 A | 2026-08-05 A | RHD4ENSDZ6APPST110, RHD4CZ6C052ST3100 | 100% |  |
| RHD4CZ6C052ST1202 |  | Bedding works for GRP Pipe Line 600 mm - (RD-C-5 /2)-Z6-C052-ST | 2d | 2026-08-06 A | 2026-08-08 A | RHD4CZ6C052ST1102 | 100% |  |
| RHD4CZ6C052ST1302 |  | Installing for GRP Pipe Line 600 mm - (RD-C-5 /2)-Z6-C052-ST | 2d | 2026-08-09 A | 2026-08-10 A | RHD4CZ6C052ST1202, RHD4PRSHLSTAGST1005, RHD4PRSHLDOSST1605, RHD4PRSHLPOST1000, RHD4PRSHLDOSST1005 | 100% |  |
| RHD4CZ6C052ST1502 |  | Backfilling and warning tape works for GRP Pipe Line 600 mm - (RD-C-5 /2)-Z6-C052-ST | 2d | 2026-08-11 A | 2026-08-12 A | RHD4CZ6C052ST1402, RHD4CZ6C052ST1503 | 100% |  |
| RHD4CZ6C052ST1402 |  | Primary Test for GRP Pipe Line 600 mm - (RD-C-5 /2)-Z6-C052-ST | 2d | 2027-01-26 | 2027-01-27 | RHD4CZ6C052ST1302 |  | -148d |
|  | 4872 | **RHD4-02-002-C052-(ST)-GRP Pipes - 500 mm diameter** |  | 2026-08-04 | 2027-01-27 |  |  |  |
| RHD4CZ6C052ST1101 |  | Excavation works for GRP Pipe Line 500 mm - (RD-C-5 /2)-Z6-C052-ST | 2d | 2026-08-04 A | 2026-08-05 A | RHD4CZ6C052ST1102, RHD4ENSDZ6APPST110 | 100% |  |
| RHD4CZ6C052ST1201 |  | Bedding works for GRP Pipe Line 500 mm - (RD-C-5 /2)-Z6-C052-ST | 2d | 2026-08-06 A | 2026-08-08 A | RHD4CZ6C052ST1101 | 100% |  |
| RHD4CZ6C052ST1301 |  | Installing for GRP Pipe Line 500 mm - (RD-C-5 /2)-Z6-C052-ST | 2d | 2026-08-09 A | 2026-08-10 A | RHD4CZ6C052ST1201, RHD4CZ6C052ST1302, RHD4PRSHLSTAGST1005, RHD4PRSHLDOSST1605, RHD4PRSHLPOST1000, RHD4PRSHLDOSST1005 | 100% |  |
| RHD4CZ6C052ST1501 |  | Backfilling and warning tape works for GRP Pipe Line 500 mm - (RD-C-5 /2)-Z6-C052-ST | 2d | 2026-08-11 A | 2026-08-12 A | RHD4CZ6C052ST1401, RHD4CZ6C052ST1502 | 100% |  |
| RHD4CZ6C052ST1401 |  | Primary Test for GRP Pipe Line 500 mm - (RD-C-5 /2)-Z6-C052-ST | 2d | 2026-09-15 A | 2027-01-27 | RHD4CZ6C052ST1301 | 75% | -143d |
|  | 4871 | **RHD4-02-002-C052-(ST)-GRP Pipes - 400 mm diameter** |  | 2026-08-04 | 2026-09-19 |  |  |  |
| RHD4CZ6C052ST1100 |  | Excavation works for GRP Pipe Line 400 mm - (RD-C-5 /2)-Z6-C052-ST | 2d | 2026-08-04 A | 2026-08-05 A | RHD4CZ6C052ST1101, RHD4ENSDZ6APPST110 | 100% |  |
| RHD4CZ6C052ST1200 |  | Bedding works for GRP Pipe Line 400 mm - (RD-C-5 /2)-Z6-C052-ST | 2d | 2026-08-06 A | 2026-08-08 A | RHD4CZ6C052ST1100 | 100% |  |
| RHD4CZ6C052ST1300 |  | Installing for GRP Pipe Line 400 mm - (RD-C-5 /2)-Z6-C052-ST | 2d | 2026-08-09 A | 2026-09-15 A | RHD4CZ6C052ST1200, RHD4CZ6C052ST1301, RHD4PRSHLSTAGST1005, RHD4PRSHLDOSST1605, RHD4PRSHLPOST1000, RHD4PRSHLDOSST1005 | 100% |  |
| RHD4CZ6C052ST1500 |  | Backfilling and warning tape works for GRP Pipe Line 400 mm - (RD-C-5 /2)-Z6-C052-ST | 2d | 2026-08-11 A | 2026-09-15 A | RHD4CZ6C052ST1400, RHD4CZ6C052ST1501 | 100% |  |
| RHD4CZ6C052ST1400 |  | Primary Test for GRP Pipe Line 400 mm - (RD-C-5 /2)-Z6-C052-ST | 2d | 2026-09-17 A | 2026-09-19 A | RHD4CZ6C052ST1300 | 100% |  |
|  | 4886 | **RHD4-02-002-C052-(ST)-UPVC Pipes - 400 mm diameter** |  | 2026-09-03 | 2027-02-15 |  |  |  |
| RHD4CZ6C052ST2501 |  | Backfilling and warning tape works for UPVC Pipe Line 400 mm - (RD-C-5 /2)-Z6-C052-ST | 2d | 2026-09-03 A | 2026-10-22 A | RHD4CZ6C052ST2401, RHD4CZ6C052ST6100, RHD4CZ6C052ST1500 | 100% |  |
| RHD4CZ6C052ST2101 |  | Excavation works for UPVC Pipe Line 400 mm - (RD-C-5 /2)-Z6-C052-ST | 2d | 2026-09-15 A | 2026-09-16 A | RHD4CZ6C052ST3300, RHD4CZ6C052ST3301, RHD4CZ6C052ST7300, RHD4CZ6C052ST8300, RHD4ENSDZ6APPST110 | 100% |  |
| RHD4CZ6C052ST2201 |  | Bedding works for UPVC Pipe Line 400 mm - (RD-C-5 /2)-Z6-C052-ST | 2d | 2026-09-17 A | 2026-09-19 A | RHD4CZ6C052ST2101 | 100% |  |
| RHD4CZ6C052ST2301 |  | Installing for UPVC Pipe Line 400 mm - (RD-C-5 /2)-Z6-C052-ST | 2d | 2026-09-19 A | 2026-09-20 A | RHD4CZ6C052ST2201, RHD4PRSHLDOSST1105, RHD4PRSHLSTAGST1105, RHD4CZ6C052ST7300, RHD4CZ6C052ST8300 | 100% |  |
| RHD4CZ6C052ST2401 |  | Primary Test for UPVC Pipe Line 400 mm - (RD-C-5 /2)-Z6-C052-ST | 2d | 2027-02-14 | 2027-02-15 | RHD4CZ6C052ST2301 |  | -159d |
|  | 4885 | **RHD4-02-002-C052-(ST)-UPVC Pipes - 300 mm diameter** |  | 2026-08-04 | 2027-02-25 |  |  |  |
| RHD4CZ6C052ST2100 |  | Excavation works for UPVC Pipe Line 300 mm - (RD-C-5 /2)-Z6-C052-ST | 3d | 2026-08-04 A | 2027-02-15 | RHD4CZ6C052ST3300, RHD4CZ6C052ST3301, RHD4CZ6C052ST2101, RHD4ENSDZ6APPST110 | 90% | -165d |
| RHD4CZ6C052ST2200 |  | Bedding works for UPVC Pipe Line 300 mm - (RD-C-5 /2)-Z6-C052-ST | 3d | 2026-08-06 A | 2027-02-17 | RHD4CZ6C052ST2100 | 90% | -165d |
| RHD4CZ6C052ST2300 |  | Installing for UPVC Pipe Line 300 mm - (RD-C-5 /2)-Z6-C052-ST | 3d | 2026-08-10 A | 2027-02-20 | RHD4CZ6C052ST2200, RHD4CZ6C052ST2301, RHD4PRSHLDOSST1105, RHD4PRSHLSTAGST1105, RHD4CZ6C052ST7300, RHD4CZ6C052ST8300 | 90% | -165d |
| RHD4CZ6C052ST2500 |  | Backfilling and warning tape works for UPVC Pipe Line 300 mm - (RD-C-5 /2)-Z6-C052-ST | 4d | 2026-08-12 A | 2027-02-25 | RHD4CZ6C052ST2400, RHD4CZ6C052ST6100, RHD4CZ6C052ST2501 | 90% | -165d |
| RHD4CZ6C052ST2400 |  | Primary Test for UPVC Pipe Line 300 mm - (RD-C-5 /2)-Z6-C052-ST | 2d | 2027-02-21 | 2027-02-23 | RHD4CZ6C052ST2300 |  | -165d |
|  | 4893 | **RHD4-02-002-C052-(ST)-Concrete Encasement** |  | 2026-10-06 | 2027-02-20 |  |  |  |
| RHD4CZ6C052ST6100 |  | Pipe Encasement for Storm Pipelines - (RD-C-5 /2)-Z6-C052-ST | 2d | 2026-10-06 A | 2027-02-20 | RHD4CZ6C052ST2301 SS, RHD4CZ6C052ST2300 SS, RHD4CZ6C052ST2300 FF, RHD4CZ6C052ST2301 FF, RHD4CZ6C052ST2201, RHD4CZ6C052ST2200 | 50% | -163d |
|  | 4894 | **RHD4-02-002-Z6-C052-Catch Basin - ST** |  | 2026-08-04 | 2027-02-28 |  |  |  |
|  | 4895 | **RHD4-02-002-C052-(ST)-Single Catch Basin Works** |  | 2026-08-04 | 2027-02-28 |  |  |  |
| RHD4CZ6C052ST7100 |  | Excavation works for Single Catch Basin - (RD-C-5 /2)-Z6-C052-ST | 4d | 2026-08-04 A | 2027-02-02 | RHD4CZ6C052ST3300, RHD4CZ6C052ST3301, RHD4ENSDZ6APPST110 | 71% | -172d |
| RHD4CZ6C052ST7200 |  | PC Blinding, Installation and Pipe connection for Single Catch Basin - (RD-C-5 /2)-Z6-C052-ST | 4d | 2026-08-06 A | 2027-02-07 | RHD4CZ6C052ST7100 | 71% | -172d |
| RHD4CZ6C052ST7300 |  | Rings & C.Slab & Final Backfill for Single Catch Basin - (RD-C-5 /2)-Z6-C052-ST | 5d | 2026-10-27 A | 2027-02-13 | RHD4CZ6C052ST7200, RHD4PRSHLDOSST1305, RHD4PRSHLSTAGST1305 |  | -172d |
| RHD4CZ6C052ST7400 |  | Steel Cover for Single Catch Basin - (RD-C-5 /2)-Z6-C052-ST | 4d | 2027-02-14 | 2027-02-17 | RHD4CZ6C052ST7300, RHD4PRSHLDOSST1705 |  | -172d |
| RHD4CZ6C052ST7500 |  | Finishing and Insulation works for Single Catch Basin - (RD-C-5 /2)-Z6-C052-ST | 8d | 2027-02-18 | 2027-02-28 | RHD4CZ6C052ST7400 |  | -165d |
|  | 4896 | **RHD4-02-002-C052-(ST)-Double Catch Basin Works** |  | 2026-08-04 | 2027-02-23 |  |  |  |
| RHD4CZ6C052ST8100 |  | Excavation works for Double Catch Basin - (RD-C-5 /2)-Z6-C052-ST | 2d | 2026-08-04 A | 2026-08-06 A | RHD4CZ6C052ST3300, RHD4CZ6C052ST3301, RHD4CZ6C052ST7100, RHD4ENSDZ6APPST110 | 100% |  |
| RHD4CZ6C052ST8200 |  | PC Blinding, Installation and Pipe connection for Double Catch Basin - (RD-C-5 /2)-Z6-C052-ST | 2d | 2026-08-06 A | 2026-08-09 A | RHD4CZ6C052ST8100 | 100% |  |
| RHD4CZ6C052ST8300 |  | Rings & C.Slab & Final Backfillfor Double Catch Basin - (RD-C-5 /2)-Z6-C052-ST | 2d | 2027-02-03 | 2027-02-04 | RHD4CZ6C052ST8200, RHD4PRSHLDOSST1305, RHD4PRSHLSTAGST1305 |  | -161d |
| RHD4CZ6C052ST8400 |  | Steel Cover for Double Catch Basin - (RD-C-5 /2)-Z6-C052-ST | 2d | 2027-02-18 | 2027-02-20 | RHD4CZ6C052ST8300, RHD4PRSHLDOSST1705, RHD4CZ6C052ST7400 |  | -172d |
| RHD4CZ6C052ST8500 |  | Finishing and Insulation works for Double Catch Basin - (RD-C-5 /2)-Z6-C052-ST | 2d | 2027-02-21 | 2027-02-23 | RHD4CZ6C052ST8400 |  | -172d |
|  | 4299 | **RHD4-02-002-Z6-C052-Concrete Box Culvert - ST** |  | 2026-06-11 | 2027-03-17 |  |  |  |
|  | 4300 | **RHD4-02-002-C052-(ST)-Concrete Box Culvert** |  | 2026-06-11 | 2027-03-17 |  |  |  |
| RHD4CZ6C052ST4100 |  | Excavation works for Box Culvert - (RD-C-5/2)-Z6-C052-ST(Completed) | 46d | 2026-06-11 A | 2026-06-13 A | RHD4CZ6C052RD1100 | 100% |  |
| RHD4CZ6C052ST4200 |  | PC works for Box Culvert - (RD-C-5/2)-Z6-C052-ST(Completed) | 43d | 2026-06-15 A | 2026-06-18 A | RHD4CZ6C052ST4100 SS | 100% |  |
| RHD4CZ6C052ST4400 |  | Raft works for Box Culvert - (RD-C-5/2)-Z6-C052-ST(Completed) | 21d | 2026-07-11 A | 2026-07-16 A | RHD4CZ6C052ST4200 SS | 100% |  |
| RHD4CZ6C052ST4500 |  | Wall and slab works for Box Culvert - (RD-C-5/2)-Z6-C052-ST | 5d | 2026-08-04 A | 2026-09-22 A | RHD4CZ6C052ST4400, RHD4CZ6C052ST4200, RHD4CZ6C052RD1100, RHD4CZ6C052ST4100 | 100% |  |
| RHD4CZ6C052ST4600 |  | Insulation and Testing for Box Culvert - (RD-C-5/2)-Z6-C052-ST | 4d | 2026-09-19 A | 2027-03-17 | RHD4CZ6C052ST4700, RHD4CZ6C052ST5400 | 80% | -115d |
| RHD4CZ6C052ST4700 |  | Backfilling works for Box Culvert - (RD-C-5/2)-Z6-C052-ST | 13d | 2026-09-26 A | 2026-10-10 A | RHD4CZ6C052ST4500, RHD4CZ6C052ST5300 | 100% |  |
|  | 4301 | **RHD4-02-002-C052-(ST)-Concrete Chambers** |  | 2026-08-20 | 2027-03-13 |  |  |  |
| RHD4CZ6C052ST5100 |  | Excavation and Bedding for Concrete Chambers - for Box Culvert - (RD-C-5/2)-Z6-C052-ST | 3d | 2026-08-20 A | 2027-02-27 | RHD4CZ6C052ST4500 | 50% | -115d |
| RHD4CZ6C052ST5200 |  | PC works for Concrete Chambers - for Box Culvert - (RD-C-5/2)-Z6-C052-ST | 3d | 2026-08-25 A | 2027-03-02 | RHD4CZ6C052ST5100 | 50% | -115d |
| RHD4CZ6C052ST5300 |  | Installation for Concrete Chambers - for Box Culvert - (RD-C-5/2)-Z6-C052-ST | 3d | 2026-08-30 A | 2027-03-06 | RHD4CZ6C052ST5200 | 50% | -115d |
| RHD4CZ6C052ST5400 |  | Backfilling works for Concrete Chambers - for Box Culvert - (RD-C-5/2)-Z6-C052-ST | 3d | 2027-03-07 | 2027-03-13 | RHD4CZ6C052ST5300 |  | -115d |

| ID | WBS | Task | Duration | Start | Finish | Predecessors | Complete | Total float |
| --- | --- | --- | --- | --- | --- | --- | --- | --- |
|  | 4919 | **RHD4-02-002-Z6-C052-Sewage Network - SW** |  | 2026-08-08 | 2027-03-03 |  |  |  |
|  | 4929 | **RHD4-02-002-C052-(SW)-MH Works - 1200 mm diameter** |  | 2026-08-08 | 2027-03-03 |  |  |  |
| RHD4CZ6C052SW3100 |  | Excavation and PC Blinding works for MH 1200 mm - (RD-C-5 /2)-Z6-C052-SW | 5d | 2026-08-08 A | 2026-09-20 A | RHD4ENSDZ6APPSW120, RHD4CZ6C052ST1503, RHD4CZ6C052ST2100 | 100% |  |
| RHD4CZ6C052SW3200 |  | Installation of Base for MH 1200 mm - (RD-C-5 /2)-Z6-C052-SW | 5d | 2026-08-10 A | 2026-09-22 A | RHD4CZ6C052SW3100 | 100% |  |
| RHD4CZ6C052SW3300 |  | MH Ring and C.Slab works and Backfilling works for MH 1200 mm - (RD-C-5 /2)-Z6-C052-SW | 5d | 2027-02-16 | 2027-02-21 | RHD4CZ6C052SW3200, RHD4PRSHLDOSSW1305, RHD4PRSHLSTAGSW1305 |  | -165d |
| RHD4CZ6C052SW3400 |  | Steel Cover for MH 1200 mm - (RD-C-5 /2)-Z6-C052-SW | 3d | 2027-02-23 | 2027-02-25 | RHD4CZ6C052SW3300, RHD4PRSHLDOSSW1405, RHD4PRSHLSTAGSW1405 |  | -161d |
| RHD4CZ6C052SW3500 |  | Finishing, Benching, Testing works for MH 1200 mm - (RD-C-5 /2)-Z6-C052-SW | 5d | 2027-02-27 | 2027-03-03 | RHD4CZ6C052SW3400 |  | -161d |
|  | 4925 | **RHD4-02-002-C052-(SW)-UPVC Pipes - 200 mm diameter** |  | 2026-08-11 | 2027-02-28 |  |  |  |
| RHD4CZ6C052SW2100 |  | Excavation works for UPVC Pipe Line 200 mm - (RD-C-5 /2)-Z6-C052-SW | 2d | 2026-08-11 A | 2026-08-15 A | RHD4CZ6C052SW3200, RHD4ENSDZ6APPSW120 | 100% |  |
| RHD4CZ6C052SW2200 |  | Bedding works for UPVC Pipe Line 200 mm - (RD-C-5 /2)-Z6-C052-SW | 2d | 2026-08-13 A | 2026-08-16 A | RHD4CZ6C052SW2100 | 100% |  |
| RHD4CZ6C052SW2300 |  | Installing for UPVC Pipe Line 200 mm - (RD-C-5 /2)-Z6-C052-SW | 3d | 2026-08-15 A | 2026-08-17 A | RHD4CZ6C052SW2200, RHD4CZ6C052SW3300, RHD4PRSHLSTAGSW1005, RHD4PRSHLDOSSW1305, RHD4PRSHLPOSW1000, RHD4PRSHLDOSSW1005, RHD4PRSHLDOSSW1004, RHD4PRSHLDOSSW1304, RHD4PRSHLPOSW1100, RHD4PRSHLDOSSW1104 | 100% |  |
| RHD4CZ6C052SW2500 |  | Backfilling and warning tape works for UPVC Pipe Line 200 mm - (RD-C-5 /2)-Z6-C052-SW | 3d | 2026-08-16 A | 2027-02-28 | RHD4CZ6C052SW2400 | 61% | -165d |
| RHD4CZ6C052SW2400 |  | Primary Test for UPVC Pipe Line 200 mm - (RD-C-5 /2)-Z6-C052-SW | 2d | 2026-09-20 A | 2027-02-24 | RHD4CZ6C052SW2300 | 31% | -165d |
|  | 4928 | **RHD4-02-002-C052-(SW)-Concrete Encasement** |  |  |  |  |  |  |
|  | 4956 | **RHD4-02-002-Z6-C052-Potable Network - PT** |  | 2026-08-04 | 2027-04-01 |  |  |  |
|  | 4957 | **RHD4-02-002-C052-(PT)-HDPE Pipes - 110 mm diameter** |  | 2026-08-04 | 2027-03-21 |  |  |  |
| RHD4CZ6C052PT1100 |  | Excavation works for HDPE Pipline 110 mm - (RD-C-5 /2)-Z6-C052-PT | 2d | 2026-08-04 A | 2027-03-04 | RHD4CZ6C052PT1101, RHD4CZ6C052SW2500, RHD4ENSDZ6APPPT130, RHD4ENMSPT2000 | 81% | -165d |
| RHD4CZ6C052PT1200 |  | Bedding works for HDPE Pipline 110 mm - (RD-C-5 /2)-Z6-C052-PT | 2d | 2026-08-06 A | 2027-03-07 | RHD4CZ6C052PT1100, RHD4CZ6C052PT1201 | 81% | -159d |
| RHD4CZ6C052PT1300 |  | Installing for HDPE Pipline 110 mm - (RD-C-5 /2)-Z6-C052-PT | 2d | 2026-08-08 A | 2027-03-14 | RHD4CZ6C052PT1200, RHD4CZ6C052PT1301, RHD4PRSHLDOSPT1000, RHD4PRSHLSTAGPT1000 | 81% | -160d |
| RHD4CZ6C052PT1400 |  | Primary Test for HDPE Pipline 110 mm - (RD-C-5 /2)-Z6-C052-PT | 2d | 2027-03-17 | 2027-03-18 | RHD4CZ6C052PT1300, RHD4CZ6C052PT1401, RHD4CZ6C052PT5100 |  | -160d |
| RHD4CZ6C052PT1500 |  | Backfilling and warning tape works for HDPE Pipline 110 mm - (RD-C-5 /2)-Z6-C052-PT | 2d | 2027-03-20 | 2027-03-21 | RHD4CZ6C052PT1400, RHD4CZ6C052PT1501 |  | -160d |
|  | 3643 | **RHD4-02-002-C052-(PT)-Air Valve Chambers** |  | 2027-03-06 | 2027-03-20 |  |  |  |
| RHD4CZ6C052PT2102 |  | Excavation and Bedding for Air Valve Chambers for Potable Water Network - (RD-C-5 /2)-Z6-C052-PT | 2d | 2027-03-06 | 2027-03-07 | RHD4CZ6C052PT2101 SS |  | -165d |
| RHD4CZ6C052PT2202 |  | PC works for Air Valve Chambers for Potable Water Network - (RD-C-5 /2)-Z6-C052-PT | 2d | 2027-03-14 | 2027-03-15 | RHD4CZ6RA01RD3100, RHD4CZ6C052PT2102 |  | -167d |
| RHD4CZ6C052PT2302 |  | Installation for Air Valve Chambers for Potable Water Network - (RD-C-5 /2)-Z6-C052-PT | 2d | 2027-03-16 | 2027-03-17 | RHD4CZ6C052PT2202 |  | -167d |
| RHD4CZ6C052PT2402 |  | Backfilling works for Air Valve Chambers for Potable Water Network - (RD-C-5 /2)-Z6-C052-PT | 2d | 2027-03-18 | 2027-03-20 | RHD4CZ6C052PT2302 |  | -167d |
|  | 3644 | **RHD4-02-002-C052-(PT)-Air Valves** |  | 2027-03-18 | 2027-03-22 |  |  |  |
| RHD4CZ6C052PT3103 |  | Installation for Air Valves for Potable Water Network - (RD-C-5 /2)-Z6-C052-PT | 2d | 2027-03-18 | 2027-03-20 | RHD4CZ6C052PT2302 |  | -167d |
| RHD4CZ6C052PT3203 |  | Stem and Service box for Air Valves for Potable Water Network - (RD-C-5 /2)-Z6-C052-PT | 2d | 2027-03-21 | 2027-03-22 | RHD4CZ6C052PT3103, RHD4CZ6C052PT2402 |  | -167d |
|  | 4962 | **RHD4-02-002-C052-(PT)-Gate Valves (Direct Buried)** |  | 2027-03-13 | 2027-03-23 |  |  |  |
| RHD4CZ6C052PT3100 |  | Installation for Direct Buried Gate Valves - (RD-C-5 /2)-Z6-C052-PT | 2d | 2027-03-13 | 2027-03-14 | RHD4CZ6C052PT1301 FF, RHD4CZ6C052PT1300 FF, RHD4CZ6C052PT1301 SS, RHD4CZ6C052PT1300 SS, RHD4PRSHLDOSPT1200, RHD4PRSHLSTAGPT1200 |  | -160d |
| RHD4CZ6C052PT3200 |  | Stem and Service box for Direct Buried Gate Valves - (RD-C-5 /2)-Z6-C052-PT | 2d | 2027-03-22 | 2027-03-23 | RHD4CZ6C052PT3100, RHD4CZ6C052PT1501, RHD4CZ6C052PT1500, RHD4PRSHLDOSPT1300, RHD4PRSHLSTAGPT1300 |  | -158d |
|  | 4965 | **RHD4-02-002-C052-(PT)-Wash out Valve Chambers** |  | 2027-03-06 | 2027-03-17 |  |  |  |
| RHD4CZ6C052PT2101 |  | Excavation and Bedding for Wash out Valve Chambers for Potable Water Network - (RD-C-5 /2)-Z6-C052-PT | 2d | 2027-03-06 | 2027-03-07 | RHD4ENSDZ6APPPT130, RHD4CZ6C052PT1100 |  | -165d |
| RHD4CZ6C052PT2201 |  | PC works for Wash out Valve Chambers for Potable Water Network - (RD-C-5 /2)-Z6-C052-PT | 2d | 2027-03-08 | 2027-03-13 | RHD4CZ6C052PT2101 |  | -165d |
| RHD4CZ6C052PT2301 |  | Installation for Wash out Valve Chambers for Potable Water Network - (RD-C-5 /2)-Z6-C052-PT | 2d | 2027-03-14 | 2027-03-15 | RHD4CZ6C052PT2201, RHD4PRSHLDOSPT1100, RHD4PRSHLDOSPT1400, RHD4PRSHLSTAGPT1100, RHD4PRSHLSTAGPT1400 |  | -165d |
| RHD4CZ6C052PT2401 |  | Backfilling works for Wash out Valve Chambers for Potable Water Network - (RD-C-5 /2)-Z6-C052-PT | 2d | 2027-03-16 | 2027-03-17 | RHD4CZ6C052PT2301 |  | -165d |
|  | 4966 | **RHD4-02-002-C052-(PT)-Wash out Valves** |  | 2027-03-16 | 2027-03-20 |  |  |  |
| RHD4CZ6C052PT3102 |  | Installation for Wash out Valves for Potable Water Network - (RD-C-5 /2)-Z6-C052-PT | 2d | 2027-03-16 | 2027-03-17 | RHD4CZ6C052PT2301, RHD4PRSHLDOSPT1200, RHD4PRSHLSTAGPT1200 |  | -165d |
| RHD4CZ6C052PT3202 |  | Stem and Service box for Wash out Valves for Potable Water Network - (RD-C-5 /2)-Z6-C052-PT | 2d | 2027-03-18 | 2027-03-20 | RHD4CZ6C052PT3102, RHD4CZ6C052PT2401, RHD4PRSHLDOSPT1300, RHD4PRSHLSTAGPT1300 |  | -165d |
|  | 4969 | **RHD4-02-002-C052-(PT)-Fire Hydrant** |  | 2027-03-22 | 2027-04-01 |  |  |  |
| RHD4CZ6C052PT4100 |  | Excavation and Bedding and Pipe Installation for Fire Hydrant - (RD-C-5 /2)-Z6-C052-PT | 2d | 2027-03-22 | 2027-03-23 | RHD4CZ6C052PT1501, RHD4CZ6C052PT1500, RHD4ENSDZ6APPPT130 |  | -160d |
| RHD4CZ6C052PT4200 |  | Valve Installation for Fire Hydrant - (RD-C-5 /2)-Z6-C052-PT | 2d | 2027-03-24 | 2027-03-25 | RHD4CZ6C052PT4100 |  | -97d |
| RHD4CZ6C052PT4300 |  | Stem for Fire Hydrant - (RD-C-5 /2)-Z6-C052-PT | 2d | 2027-03-27 | 2027-03-28 | RHD4CZ6C052PT4200 |  | -97d |
| RHD4CZ6C052PT4400 |  | Fire Installation for Fire Hydrant - (RD-C-5 /2)-Z6-C052-PT | 2d | 2027-03-29 | 2027-03-30 | RHD4CZ6C052PT4300, RHD4PRSHLDOSPT1500, RHD4PRSHLSTAGPT1500 |  | -97d |
| RHD4CZ6C052PT4500 |  | Protection Barriers for Fire Hydrant - (RD-C-5 /2)-Z6-C052-PT | 2d | 2027-03-31 | 2027-04-01 | RHD4CZ6C052PT4400 |  | -97d |
|  | 4970 | **RHD4-02-002-C052-(PT)-Concrete Encasement** |  | 2027-03-13 | 2027-03-14 |  |  |  |
| RHD4CZ6C052PT5100 |  | Pipe Encasement for Potable Pipelines - (RD-C-5 /2)-Z6-C052-PT | 2d | 2027-03-13 | 2027-03-14 | RHD4CZ6C052PT1301 FF, RHD4CZ6C052PT1300 FF, RHD4CZ6C052PT1301 SS, RHD4CZ6C052PT1300 SS, RHD4CZ6C052PT1201, RHD4CZ6C052PT1200 |  | -160d |
|  | 4958 | **RHD4-02-002-C052-(PT)-HDPE Pipes - 160 mm diameter** |  | 2026-08-04 | 2027-03-18 |  |  |  |
| RHD4CZ6C052PT1101 |  | Excavation works for HDPE Pipline 160 mm - (RD-C-5 /2)-Z6-C052-PT | 2d | 2026-08-04 A | 2027-03-02 | RHD4CZ6C052SW2500, RHD4ENSDZ6APPPT130, RHD4ENMSPT2000 | 8% | -165d |
| RHD4CZ6C052PT1201 |  | Bedding works for HDPE Pipline 160 mm - (RD-C-5 /2)-Z6-C052-PT | 2d | 2026-08-06 A | 2027-03-04 | RHD4CZ6C052PT1101 | 8% | -160d |
| RHD4CZ6C052PT1301 |  | Installing for HDPE Pipline 160 mm - (RD-C-5 /2)-Z6-C052-PT | 3d | 2026-08-08 A | 2027-03-08 | RHD4CZ6C052PT1201, RHD4PRSHLDOSPT1000, RHD4PRSHLSTAGPT1000 | 8% | -160d |
| RHD4CZ6C052PT1401 |  | Primary Test for HDPE Pipline 160 mm - (RD-C-5 /2)-Z6-C052-PT | 2d | 2027-03-15 | 2027-03-16 | RHD4CZ6C052PT1301, RHD4CZ6C052PT5100, RHD4CZ6C052PT3100 |  | -160d |
| RHD4CZ6C052PT1501 |  | Backfilling and warning tape works for HDPE Pipline 160 mm - (RD-C-5 /2)-Z6-C052-PT | 2d | 2027-03-17 | 2027-03-18 | RHD4CZ6C052PT1401 |  | -160d |
|  | 4971 | **RHD4-02-002-Z6-C052-Irrigation Network - IRR** |  | 2026-08-04 | 2027-04-13 |  |  |  |
|  | 4972 | **RHD4-02-002-C052-(IRR)-HDPE Pipes - 160 mm diameter** |  | 2026-08-04 | 2027-04-11 |  |  |  |
| RHD4CZ6C052IRR1100 |  | Excavation works for HDPE Pipline 160 mm - (RD-C-5 /2)-Z6-C052-IRR | 4d | 2026-08-04 A | 2027-03-28 | RHD4CZ6C052PT1101, RHD4CZ6C052PT1100, RHD4ENSDZ6APPIRR140, RHD4ENMSRR2000, RHD4CZ6C052PT4100 | 8% | -160d |
| RHD4CZ6C052IRR1200 |  | Bedding works for HDPE Pipline 160 mm - (RD-C-5 /2)-Z6-C052-IRR | 3d | 2026-08-06 A | 2027-03-31 | RHD4CZ6C052IRR1100 | 10% | -155d |
| RHD4CZ6C052IRR1300 |  | Installing for HDPE Pipline 160 mm - (RD-C-5 /2)-Z6-C052-IRR | 4d | 2026-08-08 A | 2027-04-05 | RHD4CZ6C052IRR1200, RHD4PRSHLDOSIRR1000, RHD4PRSHLSTAGIRR1000 | 6% | -155d |
| RHD4CZ6C052IRR1400 |  | Primary Test for HDPE Pipline 160 mm - (RD-C-5 /2)-Z6-C052-IRR | 2d | 2027-04-06 | 2027-04-07 | RHD4CZ6C052IRR1300 |  | -155d |
| RHD4CZ6C052IRR1500 |  | Backfilling and warning tape works for HDPE Pipline 160 mm - (RD-C-5 /2)-Z6-C052-IRR | 3d | 2027-04-08 | 2027-04-11 | RHD4CZ6C052IRR1400 |  | -155d |
|  | 6685 | **RHD4-02-002-C052-(IRR)-Wash out Chamber** |  | 2027-03-24 | 2027-04-01 |  |  |  |
| RHD4CZ6C052IRR2101 |  | Excavation and Bedding for Wash out Chamber for Irrigation Network - (RD-C-5 /2)-Z6-C052-IRR | 2d | 2027-03-24 | 2027-03-25 | RHD4CZ6C052IRR1100 SS |  | -160d |
| RHD4CZ6C052IRR2201 |  | PC works for Wash out Chamber for Irrigation Network - (RD-C-5 /2)-Z6-C052-IRR | 2d | 2027-03-27 | 2027-03-28 | RHD4CZ6C052IRR2101 |  | -160d |
| RHD4CZ6C052IRR2301 |  | Installation for Wash out Chamber for Irrigation Network - (RD-C-5 /2)-Z6-C052-IRR | 2d | 2027-03-29 | 2027-03-30 | RHD4CZ6C052IRR2201 |  | -160d |
| RHD4CZ6C052IRR2401 |  | Backfilling works for Wash out Chamber for Irrigation Network - (RD-C-5 /2)-Z6-C052-IRR | 2d | 2027-03-31 | 2027-04-01 | RHD4CZ6C052IRR2301 |  | -160d |
|  | 6686 | **RHD4-02-002-C052-(IRR)-Wash out Valves** |  | 2027-03-31 | 2027-04-04 |  |  |  |
| RHD4CZ6C052IRR3102 |  | Installation for Wash out Valve for Irrigation Network - (RD-C-5 /2)-Z6-C052-IRR | 2d | 2027-03-31 | 2027-04-01 | RHD4CZ6C052IRR2301 |  | -160d |
| RHD4CZ6C052IRR3202 |  | Stem and Service box for Wash out Valve for Irrigation Network - (RD-C-5 /2)-Z6-C052-IRR | 2d | 2027-04-03 | 2027-04-04 | RHD4CZ6C052IRR3102, RHD4CZ6C052IRR2401 |  | -160d |
|  | 4980 | **RHD4-02-002-C052-(IRR)-Gate Valves (Direct Buried)** |  | 2027-04-01 | 2027-04-13 |  |  |  |

| ID | WBS | Task | Duration | Start | Finish | Predecessors | Complete | Total float |
| --- | --- | --- | --- | --- | --- | --- | --- | --- |
| RHD4CZ6C052IRR3100 |  | Installation for Direct Buried Gate Valves - (RD-C-5 /2)-Z6-C052-IRR | 2d | 2027-04-01 | 2027-04-03 | RHD4CZ6C052IRR1300 SS, RHD4PRSHLDOSIRR1100, RHD4PRSHLSTAGIRR1100 |  | -148d |
| RHD4CZ6C052IRR3200 |  | Stem and Service box for Direct Buried Gate Valves - (RD-C-5 /2)-Z6-C052-IRR | 2d | 2027-04-12 | 2027-04-13 | RHD4CZ6C052IRR3100, RHD4CZ6C052IRR1500, RHD4PRSHLDOSIRR1300, RHD4PRSHLSTAGIRR1300 |  | -155d |
|  | 5005 | **RHD4-02-002-Z6-C052-Medium Voltage Network - MV** |  | 2026-08-04 | 2027-06-21 |  |  |  |
|  | 5006 | **RHD4-02-002-C052-(MV)-Medium Voltage cable trench** |  | 2027-05-06 | 2027-05-22 |  |  |  |
| RHD4CZ6C052MV1100 |  | Excavation for Medium Voltage Trench - (RD-C-5 /2)-Z6-C052-MV | 5d | 2027-05-06 | 2027-05-11 | RHD4ENSDZ6APPMV150, RHD4CZ6C052RD3100, RHD4CZ6C062MV3401 |  | -172d |
| RHD4CZ6C052MV1200 |  | Trench Backfilling for Medium Voltage Network - (RD-C-5 /2)-Z6-C052-MV | 5d | 2027-05-12 | 2027-05-22 | RHD4CZ6C052MV1100 |  | -154d |
|  | 5007 | **RHD4-02-002-C052-(MV)-Medium Voltage duct banks** |  | 2026-08-04 | 2027-02-25 |  |  |  |
| RHD4CZ6C052MV2100 |  | Excavation of Duct Banks for Medium Voltage Network - (RD-C-5 /2)-Z6-C052-MV | 2d | 2026-08-04 A | 2027-02-17 | RHD4ENSDZ6APPMV150, RHD4CZ6C052SW3200 | 80% | -159d |
| RHD4CZ6C052MV2200 |  | Installation of Duct Banks for Medium Voltage Network - (RD-C-5 /2)-Z6-C052-MV | 2d | 2026-08-06 A | 2027-02-20 | RHD4CZ6C052MV2100, RHD4PRSHLDOSMV1000, RHD4PRSHLSTAGMV1000 SS | 80% | -159d |
| RHD4CZ6C052MV2300 |  | Pouring of Duct Banks for Medium Voltage Network - (RD-C-5 /2)-Z6-C052-MV | 2d | 2026-08-09 A | 2027-02-23 | RHD4CZ6C052MV2200 | 80% | -159d |
| RHD4CZ6C052MV2400 |  | Backfilling of Duct Banks for Medium Voltage Network - (RD-C-5 /2)-Z6-C052-MV | 2d | 2026-08-11 A | 2027-02-25 | RHD4CZ6C052MV2300 | 80% | -159d |
|  | 5008 | **RHD4-02-002-C052-(MV)-Medium Voltage cables 3Cx 500 mm²** |  | 2027-05-12 | 2027-06-21 |  |  |  |
| RHD4CZ6C052MV3100 |  | Installation of Medium Voltage Cables 3Cx 500 mm² - (RD-C-5 /2)-Z6-C052-MV | 20d | 2027-05-12 | 2027-06-08 | RHD4CZ6C052MV1100, RHD4PRSHLDOSMV1100, RHD4ENMSMV2000, RHD4ENMSMV2010, RHD4PRSHLSTAGMV1100 |  | -172d |
| RHD4CZ6C052MV3200 |  | Joints Installation of Medium Voltage Cables 3Cx 500 mm² - (RD-C-5 /2)-Z6-C052-MV | 3d | 2027-06-09 | 2027-06-12 | RHD4CZ6C052MV3100, RHD4PRSHLDOSMV1300, RHD4PRSHLSTAGMV1300 |  | -172d |
| RHD4CZ6C052MV3300 |  | Testing of Medium Voltage Cables 3Cx 500 mm² - (RD-C-5 /2)-Z6-C052-MV | 6d | 2027-06-13 | 2027-06-19 | RHD4CZ6C052MV3200, RHD4CZ6C052MV1200, RHD4CZ6C052MV4200 |  | -172d |
| RHD4CZ6C052MV3400 |  | Termination of Medium Voltage Cables 3Cx 500 mm² - (RD-C-5 /2)-Z6-C052-MV | 2d | 2027-06-20 | 2027-06-21 | RHD4CZ6C052MV3300 |  | -172d |
|  | 5009 | **RHD4-02-002-C052-(MV)-Medium Voltage cables 3Cx 50 mm²** |  | 2027-06-20 | 2027-06-21 |  |  |  |
| RHD4CZ6C052MV3401 |  | Termination of Medium Voltage Cables 3Cx 50 mm² - (RD-C-5 /2)-Z6-C052-MV | 2d | 2027-06-20 | 2027-06-21 | RHD4CZ6C052MV3400 SS, RHD4CZ6C052MV3300 |  | -172d |
|  | 5010 | **RHD4-02-002-C052-(MV)-Normally open Point (Outdoor Type)** |  | 2027-06-07 | 2027-06-10 |  |  |  |
| RHD4CZ6C052MV4100 |  | Installation for Normally open Point - (RD-C-5 /2)-Z6-C052-MV | 2d | 2027-06-07 | 2027-06-08 | RHD4CZ6C052MV3100 FF, RHD4PRSHLDOSMV1400, RHD4PRSHLSTAGMV1400 |  | -171d |
| RHD4CZ6C052MV4200 |  | Termination for Normally open Point - (RD-C-5 /2)-Z6-C052-MV | 2d | 2027-06-09 | 2027-06-10 | RHD4CZ6C052MV4100 |  | -171d |
|  | 5012 | **RHD4-02-002-Z6-C052-Low Voltage Network - LV** |  | 2026-08-04 | 2027-04-19 |  |  |  |
|  | 5013 | **RHD4-02-002-C052-(LV)-Low Voltage duct banks** |  | 2026-08-04 | 2026-08-12 |  |  |  |
| RHD4CZ6C052LV2100 |  | Excavation of Duct Banks for Low Voltage Network - (RD-C-5 /2)-Z6-C052-LV | 2d | 2026-08-04 A | 2026-08-05 A | RHD4CZ6C052RW3000, RHD4ENSDZ6APPLV160, RHD4CZ6C052MV2100 | 100% |  |
| RHD4CZ6C052LV2200 |  | Installation of Duct Banks for Low Voltage Network - (RD-C-5 /2)-Z6-C052-LV | 2d | 2026-08-06 A | 2026-08-08 A | RHD4CZ6C052LV2100 | 100% |  |
| RHD4CZ6C052LV2300 |  | Pouring of Duct Banks for Low Voltage Network - (RD-C-5 /2)-Z6-C052-LV | 2d | 2026-08-09 A | 2026-08-10 A | RHD4CZ6C052LV2200 | 100% |  |
| RHD4CZ6C052LV2400 |  | Backfilling of Duct Banks for Low Voltage Network - (RD-C-5 /2)-Z6-C052-LV | 2d | 2026-08-11 A | 2026-08-12 A | RHD4CZ6C052LV2300 | 100% |  |
|  | 5014 | **RHD4-02-002-C052-(LV)-Low Voltage Drawpit** |  | 2027-04-05 | 2027-04-08 |  |  |  |
| RHD4CZ6C052LV5100 |  | Excavation of Drawpit size 900x900x1000mm for Low Voltage Network - (RD-C-5 /2)-Z6-C052-LV | 2d | 2027-04-05 | 2027-04-06 | RHD4CZ6C052LV2300, RHD4ENSDZ6APPLV160, RHD4CZ6C052IRR3202 |  | -154d |
| RHD4CZ6C052LV5200 |  | Installation of Drawpit size 900x900x1000mm for Low Voltage Network - (RD-C-5 /2)-Z6-C052-LV | 2d | 2027-04-07 | 2027-04-08 | RHD4CZ6C052LV5100, RHD4PRSHLDOSLV1400, RHD4PRSHLSTAGLV1400 |  | -154d |
|  | 5015 | **RHD4-02-002-C052-(LV)-Low Voltage cables** |  | 2027-04-10 | 2027-04-19 |  |  |  |
| RHD4CZ6C052LV3100 |  | Excavation for Low Voltage Cables for Low Voltage Network - (RD-C-5 /2)-Z6-C052-LV | 3d | 2027-04-10 | 2027-04-12 | RHD4ENSDZ6APPLV160, RHD4CZ6C052LV5200 |  | -154d |
| RHD4CZ6C052LV3200 |  | Cable Laying of Low Voltage Cables for Low Voltage Network - (RD-C-5 /2)-Z6-C052-LV | 2d | 2027-04-13 | 2027-04-14 | RHD4CZ6C052LV3100, RHD4PRSHLDOSLV1100, RHD4ENMSLV2000, RHD4ENMSLV2010, RHD4PRSHLSTAGLV1100 |  | -147d |
| RHD4CZ6C052LV3300 |  | Warning tape and Backfill for Low Voltage Cables for Low Voltage Network - (RD-C-5 /2)-Z6-C052-LV | 2d | 2027-04-15 | 2027-04-17 | RHD4CZ6C052LV3200 |  | -147d |
| RHD4CZ6C052LV3400 |  | Testing of Low Voltage Cables for Low Voltage Network - (RD-C-5 /2)-Z6-C052-LV | 2d | 2027-04-18 | 2027-04-19 | RHD4CZ6C052LV3300 |  | -147d |
|  | 5018 | **RHD4-02-002-Z6-C052-Street Lighting Network - SL** |  | 2026-08-04 | 2027-05-03 |  |  |  |
|  | 5019 | **RHD4-02-002-C052-(SL)-Street Lighting duct banks** |  | 2026-08-04 | 2026-08-12 |  |  |  |
| RHD4CZ6C052SL2100 |  | Excavation of Duct Banks for Street Lighting Network - (RD-C-5 /2)-Z6-C052-SL | 2d | 2026-08-04 A | 2026-08-05 A | RHD4CZ6C052LV2100, RHD4ENSDZ6APPSL170, RHD4CZ6C052IRR3200 | 100% |  |
| RHD4CZ6C052SL2200 |  | Installation of Duct Banks for Street Lighting Network - (RD-C-5 /2)-Z6-C052-SL | 2d | 2026-08-06 A | 2026-08-08 A | RHD4CZ6C052SL2100 | 100% |  |
| RHD4CZ6C052SL2300 |  | Pouring of Duct Banks for Street Lighting Network - (RD-C-5 /2)-Z6-C052-SL | 2d | 2026-08-09 A | 2026-08-10 A | RHD4CZ6C052SL2200 | 100% |  |
| RHD4CZ6C052SL2400 |  | Backfilling of Duct Banks for Street Lighting Network - (RD-C-5 /2)-Z6-C052-SL | 2d | 2026-08-11 A | 2026-08-12 A | RHD4CZ6C052SL2300, RHD4CZ6C052LV2400 | 100% |  |
|  | 5020 | **RHD4-02-002-C052-(SL)-Street Lighting Drawpit** |  | 2027-04-14 | 2027-04-18 |  |  |  |
| RHD4CZ6C052SL5100 |  | Excavation of Drawpit size 600x600x900mm for Street Lighting Network - (RD-C-5 /2)-Z6-C052-SL | 2d | 2027-04-14 | 2027-04-15 | RHD4CZ6C052SL2300, RHD4ENSDZ6APPSL170, RHD4CZ6C052LV3100 |  | -155d |
| RHD4CZ6C052SL5200 |  | Installation of Drawpit size 600x600x900mm for Street Lighting Network - (RD-C-5 /2)-Z6-C052-SL | 2d | 2027-04-17 | 2027-04-18 | RHD4CZ6C052SL5100, RHD4PRSHLDOSSL1400, RHD4PRSHLSTAGSL1400 |  | -155d |
|  | 5021 | **RHD4-02-002-C052-(SL)-Street Lighting cables** |  | 2027-04-19 | 2027-04-28 |  |  |  |
| RHD4CZ6C052SL3100 |  | Excavation for Street Lighting Cables for Street Lighting Network - (RD-C-5 /2)-Z6-C052-SL | 3d | 2027-04-19 | 2027-04-21 | RHD4ENSDZ6APPSL170, RHD4CZ6C052SL5200 |  | -155d |
| RHD4CZ6C052SL3200 |  | Cable Laying of Street Lighting Cables for Street Lighting Network - (RD-C-5 /2)-Z6-C052-SL | 2d | 2027-04-22 | 2027-04-24 | RHD4CZ6C052SL3100, RHD4PRSHLDOSSL1100, RHD4ENMSSL2000, RHD4ENMSSL2010, RHD4PRSHLSTAGSL1100 |  | -155d |
| RHD4CZ6C052SL3300 |  | Warning tape and Backfill for Street Lighting Cables for Street Lighting Network - (RD-C-5 /2)-Z6-C052-SL | 2d | 2027-04-25 | 2027-04-26 | RHD4CZ6C052SL3200 |  | -155d |
| RHD4CZ6C052SL3400 |  | Testing of Street Lighting Cables for Street Lighting Network - (RD-C-5 /2)-Z6-C052-SL | 2d | 2027-04-27 | 2027-04-28 | RHD4CZ6C052SL3300 |  | -155d |
|  | 5022 | **RHD4-02-002-C052-(SL)-Street Lighting Poles** |  | 2027-04-17 | 2027-05-03 |  |  |  |
| RHD4CZ6C052SL1100 |  | Excavation for RC Base for Lighting Poles for Street Lighting Network - (RD-C-5 /2)-Z6-C052-SL | 2d | 2027-04-17 | 2027-04-18 | RHD4CZ6C052SL2400, RHD4ENSDZ6APPSL170, RHD4CZ6C052SL5100 |  | -150d |
| RHD4CZ6C052SL1200 |  | Installation for RC Base for Lighting Poles for Street Lighting Network - (RD-C-5 /2)-Z6-C052-SL | 2d | 2027-04-19 | 2027-04-20 | RHD4CZ6C052SL1100 |  | -150d |
| RHD4CZ6C052SL1300 |  | Backfill for RC Base for Lighting Poles for Street Lighting Network - (RD-C-5 /2)-Z6-C052-SL | 2d | 2027-04-21 | 2027-04-22 | RHD4CZ6C052SL1200 |  | -150d |
| RHD4CZ6C052SL1400 |  | Installation for Lighting Poles for Street Lighting Network - (RD-C-5 /2)-Z6-C052-SL | 2d | 2027-04-29 | 2027-05-01 | RHD4CZ6C052SL1300, RHD4CZ6C052SL3400, RHD4PRSHLDOSSL1200, RHD4ENMSSL2000, RHD4ENMSSL2010, RHD4PRSHLSTAGSL1200, RHD4CZ6C052LV3400, RHD4CZ6C052LV5200 FF |  | -155d |
| RHD4CZ6C052SL1500 |  | Luminaire Installation for Lighting Poles for Street Lighting Network - (RD-C-5 /2)-Z6-C052-SL | 2d | 2027-05-02 | 2027-05-03 | RHD4CZ6C052SL1400, RHD4PRSHLDOSSL1300, RHD4PRSHLSTAGSL1300 |  | -95d |
|  | 5023 | **RHD4-02-002-C052-(SL)-Street Lighting Feeder Pillars** |  |  |  |  |  |  |
|  | 5024 | **RHD4-02-002-C052-(SL)-Street Lighting Earthing System** |  | 2027-05-02 | 2027-05-03 |  |  |  |
| RHD4CZ6C052SL6100 |  | Installation of Earthing for Lighting Poles and Fedder Pillers for Street Lighting Network - (RD-C-5 /2)-Z6-C052-SL | 2d | 2027-05-02 | 2027-05-03 | RHD4ENMSER2000, RHD4ENMSER2010, RHD4CZ6C052SL1400 |  | -155d |
|  | 5030 | **RHD4-02-002-Z6-C052-Telecommunications Network - TC** |  | 2026-08-04 | 2027-05-31 |  |  |  |
|  | 5031 | **RHD4-02-002-C052-(TC)-Telecommunications Ducts** |  | 2027-05-04 | 2027-05-31 |  |  |  |
| RHD4CZ6C052TC2100 |  | Excavation of HDPE Ducts for Telecom Network - (RD-C-5 /2)-Z6-C052-TC | 6d | 2027-05-04 | 2027-05-10 | RHD4ENSDZ6APPTC190, RHD4CZ6C052SL1500 |  | -95d |
| RHD4CZ6C052TC2200 |  | Installation of HDPE Ducts for Telecom Network - (RD-C-5 /2)-Z6-C052-TC | 8d | 2027-05-11 | 2027-05-24 | RHD4CZ6C052TC2100, RHD4PRSHLDOSTC1000, RHD4PRSHLSTAGTC1000 |  | -95d |
| RHD4CZ6C052TC2400 |  | Backfilling of HDPE Ducts for Telecom Network - (RD-C-5 /2)-Z6-C052-TC | 6d | 2027-05-25 | 2027-05-31 | RHD4CZ6C052TC2200, RHD4CZ6C052TC5200 |  | -95d |
|  | 5032 | **RHD4-02-002-C052-(TC)-Telecommunications Manholes** |  | 2027-05-11 | 2027-05-24 |  |  |  |
| RHD4CZ6C052TC5100 |  | Excavation for Manholes for Telecom Network - (RD-C-5 /2)-Z6-C052-TC | 4d | 2027-05-11 | 2027-05-19 | RHD4CZ6C052TC2100, RHD4ENSDZ6APPTC190 |  | -95d |
| RHD4CZ6C052TC5200 |  | Installation of Manholes for Telecom Network - (RD-C-5 /2)-Z6-C052-TC | 4d | 2027-05-20 | 2027-05-24 | RHD4CZ6C052TC5100, RHD4CZ6C052TC2200 SS, RHD4PRSHLDOSTC1200, RHD4PRSHLSTAGTC1200 |  | -95d |
|  | 5033 | **RHD4-02-002-C052-(TC)-Telecomminications Road Crossings** |  | 2026-08-04 | 2027-02-01 |  |  |  |
| RHD4CZ6C052TC3100 |  | Excavation for Road Crossings for Telecom Network - (RD-C-5 /2)-Z6-C052-TC | 2d | 2026-08-04 A | 2027-01-26 | RHD4ENSDZ6APPTC190, RHD4CZ6C052ST1103 | 50% | -157d |
| RHD4CZ6C052TC3200 |  | Installation of Road Crossings for Telecom Network - (RD-C-5 /2)-Z6-C052-TC | 3d | 2026-08-06 A | 2027-01-28 | RHD4CZ6C052TC3100, RHD4PRSHLDOSTC1100, RHD4PRSHLSTAGTC1100 | 50% | -152d |
| RHD4CZ6C052TC3300 |  | Pouring of Road Crossings for Telecom Network - (RD-C-5 /2)-Z6-C052-TC | 3d | 2026-08-09 A | 2027-01-31 | RHD4CZ6C052TC3200 | 50% | -152d |

| ID | WBS | Task | Duration | Start | Finish | Predecessors | Complete | Total float |
| --- | --- | --- | --- | --- | --- | --- | --- | --- |
| RHD4CZ6C052TC3400 |  | Backfilling of Road Crossings for Telecom Network - (RD-C-5 /2)-Z6-C052-TC | 2d | 2026-08-11 A | 2027-02-01 | RHD4CZ6C052TC3300 | 50% | -152d |
|  | 5034 | **RHD4-02-002-Z6-C052-Information and Communication Technologies - ICT** |  | 2026-08-04 | 2027-06-24 |  |  |  |
|  | 5035 | **RHD4-02-002-C052-(ICT)-Information and Communication Technologies Ducts** |  | 2027-06-01 | 2027-06-24 |  |  |  |
| RHD4CZ6C052ICT2100 |  | Excavation of HDPE Ducts for ICT Network - (RD-C-5 /2)-Z6-C052-ICT | 6d | 2027-06-01 | 2027-06-07 | RHD4ENSDZ6APPICT200, RHD4CZ6C052TC3100, RHD4CZ6C052TC2400 |  | -95d |
| RHD4CZ6C052ICT2200 |  | Installation of HDPE Ducts for ICT Network - (RD-C-5 /2)-Z6-C052-ICT | 9d | 2027-06-08 | 2027-06-17 | RHD4CZ6C052ICT2100, RHD4PRSHLDOSICT1000, RHD4PRSHLSTAGICT1000 |  | -95d |
| RHD4CZ6C052ICT2400 |  | Backfilling of HDPE Ducts for ICT Network - (RD-C-5 /2)-Z6-C052-ICT | 6d | 2027-06-19 | 2027-06-24 | RHD4CZ6C052ICT2200, RHD4CZ6C052ICT5200 |  | -95d |
|  | 5036 | **RHD4-02-002-C052-(ICT)-Information and Communication Technologies Manholes** |  | 2027-06-08 | 2027-06-14 |  |  |  |
| RHD4CZ6C052ICT5100 |  | Excavation for Manholes for ICT Network - (RD-C-5 /2)-Z6-C052-ICT | 3d | 2027-06-08 | 2027-06-10 | RHD4CZ6C052ICT2100, RHD4ENSDZ6APPICT200 |  | -92d |
| RHD4CZ6C052ICT5200 |  | Installation of Manholes for ICT Network - (RD-C-5 /2)-Z6-C052-ICT | 3d | 2027-06-12 | 2027-06-14 | RHD4CZ6C052ICT5100, RHD4PRSHLDOSICT1200, RHD4PRSHLSTAGICT1200 |  | -92d |
|  | 5037 | **RHD4-02-002-C052-(ICT)-Information and Communication Technologies Road Crossings** |  | 2026-08-04 | 2027-02-23 |  |  |  |
| RHD4CZ6C052ICT3100 |  | Excavation for Road Crossings for ICT Network - (RD-C-5 /2)-Z6-C052-ICT | 2d | 2026-08-04 A | 2027-01-28 | RHD4ENSDZ6APPICT200, RHD4CZ6C052TC3100 | 53% | -157d |
| RHD4CZ6C052ICT3200 |  | Installation of Road Crossings for ICT Network - (RD-C-5 /2)-Z6-C052-ICT | 3d | 2026-08-06 A | 2027-02-16 | RHD4CZ6C052ICT3100, RHD4PRSHLDOSICT1100, RHD4PRSHLSTAGICT1100 | 53% | -170d |
| RHD4CZ6C052ICT3300 |  | Pouring of Road Crossings for ICT Network - (RD-C-5 /2)-Z6-C052-ICT | 3d | 2026-08-09 A | 2027-02-20 | RHD4CZ6C052ICT3200 | 53% | -170d |
| RHD4CZ6C052ICT3400 |  | Backfilling of Road Crossings for ICT Network - (RD-C-5 /2)-Z6-C052-ICT | 2d | 2026-08-11 A | 2027-02-23 | RHD4CZ6C052ICT3300 | 53% | -170d |
|  | 5025 | **RHD4-02-002-Z6-C052-Landscape Network - LS** |  |  |  |  |  |  |
|  | 5026 | **RHD4-02-002-C052-(LS)-Landscape Lighting cables** |  |  |  |  |  |  |
|  | 5027 | **RHD4-02-002-C052-(LS)-Landscape Feeder Pillars** |  |  |  |  |  |  |
|  | 5028 | **RHD4-02-002-C052-(LS)-Landscape Bollard Poles** |  |  |  |  |  |  |
|  | 5029 | **RHD4-02-002-C052-(LS)-Landscape Feeder Pillars Earthing** |  |  |  |  |  |  |
|  | 5038 | **RHD4-02-002-Z6-C052-Security Network - CCTV** |  |  |  |  |  |  |
|  | 5039 | **RHD4-02-002-C052-(CCTV)-Civil Works** |  |  |  |  |  |  |
|  | 5055 | **RHD4-02-002-Z6-A02** |  | 2026-04-22 | 2027-07-24 |  |  |  |
|  | 5234 | **RHD4-02-002-Z6-A02-Road Works - RD** |  | 2026-04-22 | 2027-07-24 |  |  |  |
|  | 5235 | **RHD4-02-002-A02-(RD)-Subgrade** |  | 2026-04-22 | 2026-05-20 |  |  |  |
| RHD4CZ6A02RD1100 |  | Supply, lay and compaction subgrade compacted thickness 300 mm for Roads - (RD-A-2)-Z6-A02-RD | 11d | 2026-04-22 A | 2026-05-20 A | RHD4CZ6A02RW1000, RHD4CZ6A02ST1501, RHD4CZ6A02ST3300 | 100% |  |
|  | 5236 | **RHD4-02-002-A02-(RD)-Aggregate Base Course** |  | 2027-01-28 | 2027-01-30 |  |  |  |
| RHD4CZ6A02RD2100 |  | Supply, lay and compaction Aggregate base course compacted thickness 300 mmfor Roads - (RD-A-2)-Z6-A02-RD | 2d | 2027-01-28 | 2027-01-30 | RHD4PRSHLDOSRD1000, RHD4PRSHLSTAGRD1000, RHD4CZ6A02RD1100 |  | -145d |
|  | 5237 | **RHD4-02-002-A02-(RD)-Bituminous base course Two Layers, including (MC1)&(RC2)** |  | 2027-03-02 | 2027-07-07 |  |  |  |
| RHD4CZ6A02RD3100 |  | Supply, lay and Asphaltic base course including Prime Coat (MC1) for 1st Layer - (RD-A-2)-Z6-A02-RD | 2d | 2027-03-02 | 2027-03-03 | RHD4CZ6A02RD2100, RHD4PRSHLDOSRD1100, RHD4ENMSASPH2000, RHD4ENMSASPH2010, RHD4PRSHLSTAGRD1100, RHD4CZ6C052RD3100 |  | -170d |
| RHD4CZ6A02RD3200 |  | Supply, lay and Asphaltic base course including Tack Coat (RC2) for 2nd Layer - (RD-A-2)-Z6-A02-RD | 2d | 2027-07-06 | 2027-07-07 | RHD4PRSHLDOSRD1100, RHD4PRSHLSTAGRD1100, RHD4CZ6A02CCTV6100 |  | -161d |
|  | 5239 | **RHD4-02-002-A02-(RD)-Precast Concrete Curb** |  | 2027-07-08 | 2027-07-13 |  |  |  |
| RHD4CZ6A02RD5100 |  | Supply and installation Precast Concrete Kerb for Roads - (RD-A-2)-Z6-A02-RD | 5d | 2027-07-08 | 2027-07-13 | RHD4CZ6A02RD3200, RHD4PRSHLDOSRD1200, RHD4ENMSRD2000, RHD4ENMSRD2010 |  | -161d |
|  | 5242 | **RHD4-02-002-A02-(RD)-Traffic Signage** |  | 2027-07-14 | 2027-07-20 |  |  |  |
| RHD4CZ6A02RD8100 |  | Installation of Traffic Signage for Road Network - (RD-A-2)-Z6-A02-RD | 6d | 2027-07-14 | 2027-07-20 | RHD4CZ6A02RD5100 |  | -161d |
|  | 5240 | **RHD4-02-002-A02-(RD)-Precast Interlocking Block Pavers** |  |  |  |  |  |  |
|  | 5238 | **RHD4-02-002-A02-(RD)-Bituminous concrete wearing course including tack coat (RC2)** |  | 2027-07-14 | 2027-07-15 |  |  |  |
| RHD4CZ6A02RD4100 |  | Supply, lay and compaction Asphaltic wearing course including tack Coat (RC2)for Road Network - (RD-A-2)-Z6-A02-RD | 2d | 2027-07-14 | 2027-07-15 | RHD4CZ6A02RD5100 |  | -157d |
|  | 5243 | **RHD4-02-002-A02-(RD)-Speed Table and Wheel Stopper** |  |  |  |  |  |  |
|  | 5241 | **RHD4-02-002-A02-(RD)-Pavement Marking** |  | 2027-07-21 | 2027-07-24 |  |  |  |
| RHD4CZ6A02RD7100 |  | Pavement Markings for Road Network - (RD-A-2)-Z6-A02-RD | 3d | 2027-07-21 | 2027-07-24 | RHD4CZ6A02RD4100, RHD4PRSHLDOSRD1500, RHD4PRSHLSTAGRD1500, RHD4CZ6A02RD8100 |  | -161d |
|  | 5059 | **RHD4-02-002-Z6-A02-Storm Network - ST** |  | 2026-07-27 | 2027-02-08 |  |  |  |
|  | 5076 | **RHD4-02-002-A02-(ST)-MH Works - 1200 mm diameter** |  | 2026-07-27 | 2027-01-30 |  |  |  |
| RHD4CZ6A02ST3200 |  | Installation of Base for MH 1200 mm - (RD-A-2)-Z6-A02-ST | 2d | 2026-07-27 A | 2026-10-14 A | RHD4CZ6A02ST3100, RHD4PRSHLSTAGST1605 SS | 100% |  |
| RHD4CZ6A02ST3100 |  | Excavation and PC Blinding works for MH 1200 mm - (RD-A-2)-Z6-A02-ST | 2d | 2026-08-04 A | 2026-10-12 A | RHD4ENSDZ6APPST110, RHD4ENMSST2000, RHD4ENMSST2010, RHD4CZ6C052ST1103 | 100% |  |
| RHD4CZ6A02ST3300 |  | MH Ring and C.Slab works and Backfilling works for MH 1200 mm - (RD-A-2)-Z6-A02-ST | 2d | 2026-09-29 A | 2026-10-17 A | RHD4CZ6A02ST3200, RHD4PRSHLDOSST1605 | 100% |  |
| RHD4CZ6A02ST3400 |  | Steel Cover for MH 1200 mm - (RD-A-2)-Z6-A02-ST | 2d | 2027-01-26 | 2027-01-27 | RHD4CZ6A02ST3300, RHD4PRSHLDOSST1705, RHD4PRSHLSTAGST1705 |  | -195d |
| RHD4CZ6A02ST3500 |  | Finishing, Benching, Testing works for MH 1200 mm - (RD-A-2)-Z6-A02-ST | 2d | 2027-01-28 | 2027-01-30 | RHD4CZ6A02ST3400 |  | -195d |
|  | 5061 | **RHD4-02-002-A02-(ST)-GRP Pipes - 500 mm diameter** |  | 2026-08-04 | 2027-01-27 |  |  |  |
| RHD4CZ6A02ST1101 |  | Excavation works for GRP Pipe Line 500 mm - (RD-A-2)-Z6-A02-ST | 2d | 2026-08-04 A | 2026-08-05 A | RHD4CZ6A02ST3200, RHD4ENSDZ6APPST110 | 100% |  |
| RHD4CZ6A02ST1201 |  | Bedding works for GRP Pipe Line 500 mm - (RD-A-2)-Z6-A02-ST | 2d | 2026-09-15 A | 2026-09-16 A | RHD4CZ6A02ST1101 | 100% |  |
| RHD4CZ6A02ST1301 |  | Installing for GRP Pipe Line 500 mm - (RD-A-2)-Z6-A02-ST | 2d | 2026-09-16 A | 2026-09-17 A | RHD4CZ6A02ST1201, RHD4CZ6A02ST3300, RHD4PRSHLSTAGST1005, RHD4PRSHLDOSST1605, RHD4PRSHLPOST1000, RHD4PRSHLDOSST1005 | 100% |  |
| RHD4CZ6A02ST1501 |  | Backfilling and warning tape works for GRP Pipe Line 500 mm - (RD-A-2)-Z6-A02-ST | 2d | 2026-09-17 A | 2026-09-19 A | RHD4CZ6A02ST1401 | 100% |  |
| RHD4CZ6A02ST1401 |  | Primary Test for GRP Pipe Line 500 mm - (RD-A-2)-Z6-A02-ST | 2d | 2027-01-26 | 2027-01-27 | RHD4CZ6A02ST1301 |  | -180d |
|  | 5060 | **RHD4-02-002-A02-(ST)-GRP Pipes - 400 mm diameter** |  | 2026-08-04 | 2027-01-27 |  |  |  |
| RHD4CZ6A02ST1100 |  | Excavation works for GRP Pipe Line 400 mm - (RD-A-2)-Z6-A02-ST | 2d | 2026-08-04 A | 2026-08-05 A | RHD4CZ6A02ST1101, RHD4ENSDZ6APPST110 | 100% |  |
| RHD4CZ6A02ST1200 |  | Bedding works for GRP Pipe Line 400 mm - (RD-A-2)-Z6-A02-ST | 2d | 2026-09-15 A | 2026-09-16 A | RHD4CZ6A02ST1100 | 100% |  |
| RHD4CZ6A02ST1300 |  | Installing for GRP Pipe Line 400 mm - (RD-A-2)-Z6-A02-ST | 2d | 2026-09-16 A | 2026-09-17 A | RHD4CZ6A02ST1200, RHD4CZ6A02ST1301, RHD4PRSHLSTAGST1005, RHD4PRSHLDOSST1605, RHD4PRSHLPOST1000, RHD4PRSHLDOSST1005 | 100% |  |
| RHD4CZ6A02ST1500 |  | Backfilling and warning tape works for GRP Pipe Line 400 mm - (RD-A-2)-Z6-A02-ST | 2d | 2026-09-17 A | 2026-09-19 A | RHD4CZ6A02ST1400, RHD4CZ6A02ST1501 | 100% |  |
| RHD4CZ6A02ST1400 |  | Primary Test for GRP Pipe Line 400 mm - (RD-A-2)-Z6-A02-ST | 2d | 2027-01-26 | 2027-01-27 | RHD4CZ6A02ST1300 |  | -180d |
|  | 5074 | **RHD4-02-002-A02-(ST)-UPVC Pipes - 300 mm diameter** |  | 2026-08-23 | 2027-02-08 |  |  |  |
| RHD4CZ6A02ST2100 |  | Excavation works for UPVC Pipe Line 300 mm - (RD-A-2)-Z6-A02-ST | 2d | 2026-08-23 A | 2027-01-27 | RHD4ENSDZ6APPST110, RHD4CZ6A02ST3200 | 26% | -172d |
| RHD4CZ6A02ST2200 |  | Bedding works for UPVC Pipe Line 300 mm - (RD-A-2)-Z6-A02-ST | 2d | 2026-08-25 A | 2027-01-30 | RHD4CZ6A02ST2100 | 26% | -172d |
| RHD4CZ6A02ST2300 |  | Installing for UPVC Pipe Line 300 mm - (RD-A-2)-Z6-A02-ST | 2d | 2026-08-27 A | 2027-02-03 | RHD4CZ6A02ST2200, RHD4CZ6A02ST7300, RHD4PRSHLDOSST1105, RHD4PRSHLSTAGST1105 | 26% | -174d |
| RHD4CZ6A02ST2500 |  | Backfilling and warning tape works for UPVC Pipe Line 300 mm - (RD-A-2)-Z6-A02-ST | 2d | 2026-10-22 A | 2027-02-08 | RHD4CZ6A02ST2400, RHD4CZ6A02ST6100 | 26% | -174d |
| RHD4CZ6A02ST2400 |  | Primary Test for UPVC Pipe Line 300 mm - (RD-A-2)-Z6-A02-ST | 2d | 2027-02-04 | 2027-02-06 | RHD4CZ6A02ST2300 |  | -174d |
|  | 5082 | **RHD4-02-002-A02-(ST)-Concrete Encasement** |  | 2027-02-02 | 2027-02-03 |  |  |  |
| RHD4CZ6A02ST6100 |  | Pipe Encasement for Storm Pipelines - (RD-A-2)-Z6-A02-ST | 2d | 2027-02-02 | 2027-02-03 | RHD4CZ6A02ST2300 SS, RHD4CZ6A02ST2300 FF, RHD4CZ6A02ST2200 |  | -172d |
|  | 5083 | **RHD4-02-002-Z6-A02-Catch Basin - ST** |  | 2026-08-04 | 2027-02-06 |  |  |  |
|  | 5084 | **RHD4-02-002-A02-(ST)-Single Catch Basin Works** |  | 2026-08-04 | 2027-02-06 |  |  |  |
| RHD4CZ6A02ST7100 |  | Excavation works for Single Catch Basin - (RD-A-2)-Z6-A02-ST | 2d | 2026-08-04 A | 2027-01-27 | RHD4ENSDZ6APPST110, RHD4CZ6A02ST3100 | 60% | -174d |

| ID | WBS | Task | Duration | Start | Finish | Predecessors | Complete | Total float |
| --- | --- | --- | --- | --- | --- | --- | --- | --- |
| RHD4CZ6A02ST7200 |  | PC Blinding, Installation and Pipe connection for Single Catch Basin - (RD-A-2)-Z6-A02-ST | 2d | 2026-08-06 A | 2027-01-30 | RHD4CZ6A02ST7100 | 50% | -174d |
| RHD4CZ6A02ST7300 |  | Rings & C.Slab & Final Backfill for Single Catch Basin - (RD-A-2)-Z6-A02-ST | 2d | 2026-10-27 A | 2027-02-01 | RHD4CZ6A02ST7200, RHD4PRSHLDOSST1305, RHD4PRSHLSTAGST1305 |  | -174d |
| RHD4CZ6A02ST7400 |  | Steel Cover for Single Catch Basin - (RD-A-2)-Z6-A02-ST | 2d | 2027-02-02 | 2027-02-03 | RHD4CZ6A02ST7300, RHD4PRSHLDOSST1705, RHD4CZ6A02ST3400 |  | -170d |
| RHD4CZ6A02ST7500 |  | Finishing and Insulation works for Single Catch Basin - (RD-A-2)-Z6-A02-ST | 2d | 2027-02-04 | 2027-02-06 | RHD4CZ6A02ST7400 |  | -170d |
|  | 3973 | **RHD4-02-002-Z6-A02-Sewage Network - SW** |  | 2026-07-27 | 2027-02-03 |  |  |  |
|  | 3794 | **RHD4-02-002-A02-(SW)-MH Works - 1200 mm diameter** |  | 2026-07-29 | 2027-02-03 |  |  |  |
| RHD4CZ6A02SW3100 |  | Excavation and PC Blinding works for MH 1200 mm - (RD-A-2)-Z6-A02-SW | 2d | 2026-07-29 A | 2026-08-05 A | RHD4CZ6A02SW2100 | 100% |  |
| RHD4CZ6A02SW3200 |  | Installation of Base for MH 1200 mm - (RD-A-2)-Z6-A02-SW | 2d | 2027-01-26 | 2027-01-27 | RHD4CZ6A02SW3100 |  | -193d |
| RHD4CZ6A02SW3300 |  | MH Ring and C.Slab works and Backfilling works for MH 1200 mm - (RD-A-2)-Z6-A02-SW | 2d | 2027-01-28 | 2027-01-30 | RHD4CZ6A02SW3200 |  | -193d |
| RHD4CZ6A02SW3400 |  | Steel Cover for MH 1200 mm - (RD-A-2)-Z6-A02-SW | 2d | 2027-01-31 | 2027-02-01 | RHD4CZ6A02SW3300 |  | -193d |
| RHD4CZ6A02SW3500 |  | Finishing, Benching, Testing works for MH 1200 mm - (RD-A-2)-Z6-A02-SW | 2d | 2027-02-02 | 2027-02-03 | RHD4CZ6A02SW3400 |  | -193d |
|  | 3979 | **RHD4-02-002-A02-(SW)-UPVC Pipes - 200 mm diameter** |  | 2026-07-27 | 2026-10-28 |  |  |  |
| RHD4CZ6A02SW2100 |  | Excavation works for UPVC Pipe Line 200 mm - (RD-A-2)-Z6-A02-SW | 2d | 2026-07-27 A | 2026-08-11 A | RHD4CZ6A02ST3100 | 100% |  |
| RHD4CZ6A02SW2200 |  | Bedding works for UPVC Pipe Line 200 mm - (RD-A-2)-Z6-A02-SW | 2d | 2026-07-29 A | 2026-08-12 A | RHD4CZ6A02SW2100 | 100% |  |
| RHD4CZ6A02SW2300 |  | Installing for UPVC Pipe Line 200 mm - (RD-A-2)-Z6-A02-SW | 2d | 2026-08-01 A | 2026-08-15 A | RHD4CZ6A02SW2200 | 100% |  |
| RHD4CZ6A02SW2500 |  | Backfilling and warning tape works for UPVC Pipe Line 200 mm - (RD-A-2)-Z6-A02-SW | 2d | 2026-08-05 A | 2026-08-17 A | RHD4CZ6A02SW3300, RHD4CZ6A02SW2400 | 100% |  |
| RHD4CZ6A02SW2400 |  | Primary Test for UPVC Pipe Line 200 mm - (RD-A-2)-Z6-A02-SW | 2d | 2026-10-27 A | 2026-10-28 A | RHD4CZ6A02SW2300 | 100% |  |
|  | 5145 | **RHD4-02-002-Z6-A02-Potable Network - PT** |  | 2027-02-09 | 2027-03-04 |  |  |  |
|  | 5159 | **RHD4-02-002-A02-(PT)-Concrete Encasement** |  |  |  |  |  |  |
|  | 4962 | **RHD4-02-002-A02-(PT)-Gate Valves (Direct Buried)** |  | 2027-02-14 | 2027-02-23 |  |  |  |
| RHD4CZ6A02PT3100 |  | Installation for Direct Buried Gate Valves - (RD-A-2)-Z6-A02-PT | 2d | 2027-02-14 | 2027-02-15 | RHD4CZ6A02SW2500, RHD4CZ6A02PT1301 FF, RHD4CZ6A02PT1301 SS |  | -174d |
| RHD4CZ6A02PT3200 |  | Stem and Service box for Direct Buried Gate Valves - (RD-A-2)-Z6-A02-PT | 2d | 2027-02-21 | 2027-02-23 | RHD4CZ6A02PT3100, RHD4CZ6A02PT1501 |  | -174d |
|  | 4969 | **RHD4-02-002-A02-(PT)-Fire Hydrant** |  | 2027-02-21 | 2027-03-04 |  |  |  |
| RHD4CZ6A02PT4100 |  | Excavation and Bedding and Pipe Installation for Fire Hydrant - (RD-A-2)-Z6-A02-PT | 2d | 2027-02-21 | 2027-02-23 | RHD4CZ6A02ST2500, RHD4CZ6A02PT1501 |  | -169d |
| RHD4CZ6A02PT4200 |  | Valve Installation for Fire Hydrant - (RD-A-2)-Z6-A02-PT | 2d | 2027-02-24 | 2027-02-25 | RHD4CZ6A02PT4100 |  | -169d |
| RHD4CZ6A02PT4300 |  | Stem for Fire Hydrant - (RD-A-2)-Z6-A02-PT | 2d | 2027-02-27 | 2027-02-28 | RHD4CZ6A02PT4200 |  | -169d |
| RHD4CZ6A02PT4400 |  | Fire Installation for Fire Hydrant - (RD-A-2)-Z6-A02-PT | 2d | 2027-03-01 | 2027-03-02 | RHD4CZ6A02PT4300 |  | -169d |
| RHD4CZ6A02PT4500 |  | Protection Barriers for Fire Hydrant - (RD-A-2)-Z6-A02-PT | 2d | 2027-03-03 | 2027-03-04 | RHD4CZ6A02PT4400 |  | -169d |
|  | 4958 | **RHD4-02-002-A02-(PT)-HDPE Pipes - 160 mm diameter** |  | 2027-02-09 | 2027-02-20 |  |  |  |
| RHD4CZ6A02PT1101 |  | Excavation works for HDPE Pipline 160 mm - (RD-A-2)-Z6-A02-PT | 2d | 2027-02-09 | 2027-02-10 | RHD4CZ6A02SW2500, RHD4CZ6A02ST2500 |  | -174d |
| RHD4CZ6A02PT1201 |  | Bedding works for HDPE Pipline 160 mm - (RD-A-2)-Z6-A02-PT | 2d | 2027-02-11 | 2027-02-13 | RHD4CZ6A02PT1101 |  | -174d |
| RHD4CZ6A02PT1301 |  | Installing for HDPE Pipline 160 mm - (RD-A-2)-Z6-A02-PT | 2d | 2027-02-14 | 2027-02-15 | RHD4CZ6A02PT1201 |  | -174d |
| RHD4CZ6A02PT1401 |  | Primary Test for HDPE Pipline 160 mm - (RD-A-2)-Z6-A02-PT | 2d | 2027-02-16 | 2027-02-17 | RHD4CZ6A02PT1301, RHD4CZ6A02PT3100 |  | -174d |
| RHD4CZ6A02PT1501 |  | Backfilling and warning tape works for HDPE Pipline 160 mm - (RD-A-2)-Z6-A02-PT | 2d | 2027-02-18 | 2027-02-20 | RHD4CZ6A02PT1401 |  | -174d |
|  | 5201 | **RHD4-02-002-Z6-A02-Low Voltage Network - LV** |  | 2027-02-11 | 2027-03-21 |  |  |  |
|  | 5202 | **RHD4-02-002-A02-(LV)-Low Voltage duct banks** |  | 2027-02-11 | 2027-02-21 |  |  |  |
| RHD4CZ6A02LV2100 |  | Excavation of Duct Banks for Low Voltage Network - (RD-A-2)-Z6-A02-LV | 2d | 2027-02-11 | 2027-02-13 | RHD4ENSDZ6APPLV160, RHD4CZ6A02PT1101 |  | -160d |
| RHD4CZ6A02LV2200 |  | Installation of Duct Banks for Low Voltage Network - (RD-A-2)-Z6-A02-LV | 3d | 2027-02-14 | 2027-02-16 | RHD4CZ6A02LV2100, RHD4PRSHLDOSLV1000, RHD4PRSHLSTAGLV1000 |  | -160d |
| RHD4CZ6A02LV2300 |  | Pouring of Duct Banks for Low Voltage Network - (RD-A-2)-Z6-A02-LV | 2d | 2027-02-17 | 2027-02-18 | RHD4CZ6A02LV2200 |  | -160d |
| RHD4CZ6A02LV2400 |  | Backfilling of Duct Banks for Low Voltage Network - (RD-A-2)-Z6-A02-LV | 2d | 2027-02-20 | 2027-02-21 | RHD4CZ6A02LV2300 |  | -158d |
|  | 5203 | **RHD4-02-002-A02-(LV)-Low Voltage Drawpit** |  | 2027-03-04 | 2027-03-08 |  |  |  |
| RHD4CZ6A02LV5100 |  | Excavation of Drawpit size 900x900x1000mm for Low Voltage Network - (RD-A-2)-Z6-A02-LV | 2d | 2027-03-04 | 2027-03-06 | RHD4CZ6A02LV2300, RHD4ENSDZ6APPLV160, RHD4CZ6A02RD3100 |  | -170d |
| RHD4CZ6A02LV5200 |  | Installation of Drawpit size 900x900x1000mm for Low Voltage Network - (RD-A-2)-Z6-A02-LV | 2d | 2027-03-07 | 2027-03-08 | RHD4CZ6A02LV5100, RHD4PRSHLDOSLV1400, RHD4PRSHLSTAGLV1400 |  | -170d |
|  | 5204 | **RHD4-02-002-A02-(LV)-Low Voltage cables** |  | 2027-03-13 | 2027-03-21 |  |  |  |
| RHD4CZ6A02LV3100 |  | Excavation for Low Voltage Cables for Low Voltage Network - (RD-A-2)-Z6-A02-LV | 2d | 2027-03-13 | 2027-03-14 | RHD4CZ6A02LV2400, RHD4ENSDZ6APPLV160, RHD4CZ6A02LV5200 |  | -170d |
| RHD4CZ6A02LV3200 |  | Cable Laying of Low Voltage Cables for Low Voltage Network - (RD-A-2)-Z6-A02-LV | 2d | 2027-03-15 | 2027-03-16 | RHD4CZ6A02LV3100, RHD4PRSHLDOSLV1100, RHD4ENMSLV2000, RHD4ENMSLV2010, RHD4PRSHLSTAGLV1100 |  | -170d |
| RHD4CZ6A02LV3300 |  | Warning tape and Backfill for Low Voltage Cables for Low Voltage Network - (RD-A-2)-Z6-A02-LV | 2d | 2027-03-17 | 2027-03-18 | RHD4CZ6A02LV3200 |  | -170d |
| RHD4CZ6A02LV3400 |  | Testing of Low Voltage Cables for Low Voltage Network - (RD-A-2)-Z6-A02-LV | 2d | 2027-03-20 | 2027-03-21 | RHD4CZ6A02LV3300 |  | -170d |
|  | 5207 | **RHD4-02-002-Z6-A02-Street Lighting Network - SL** |  | 2027-04-14 | 2027-05-06 |  |  |  |
|  | 5210 | **RHD4-02-002-A02-(SL)-Street Lighting cables** |  | 2027-04-14 | 2027-04-22 |  |  |  |
| RHD4CZ6A02SL3100 |  | Excavation for Street Lighting Cables for Street Lighting Network - (RD-A-2)-Z6-A02-SL | 2d | 2027-04-14 | 2027-04-15 | RHD4ENSDZ6APPSL170, RHD4CZ6A02LV3400, RHD4CZ6C052SL2400 |  | -150d |
| RHD4CZ6A02SL3200 |  | Cable Laying of Street Lighting Cables for Street Lighting Network - (RD-A-2)-Z6-A02-SL | 2d | 2027-04-17 | 2027-04-18 | RHD4CZ6A02SL3100, RHD4PRSHLDOSSL1100, RHD4ENMSSL2000, RHD4ENMSSL2010, RHD4PRSHLSTAGSL1100 |  | -150d |
| RHD4CZ6A02SL3300 |  | Warning tape and Backfill for Street Lighting Cables for Street Lighting Network - (RD-A-2)-Z6-A02-SL | 2d | 2027-04-19 | 2027-04-20 | RHD4CZ6A02SL3200 |  | -150d |
| RHD4CZ6A02SL3400 |  | Testing of Street Lighting Cables for Street Lighting Network - (RD-A-2)-Z6-A02-SL | 2d | 2027-04-21 | 2027-04-22 | RHD4CZ6A02SL3300 |  | -150d |
|  | 5211 | **RHD4-02-002-A02-(SL)-Street Lighting Poles** |  | 2027-04-24 | 2027-05-06 |  |  |  |
| RHD4CZ6A02SL1100 |  | Excavation for RC Base for Lighting Poles for Street Lighting Network - (RD-A-2)-Z6-A02-SL | 2d | 2027-04-24 | 2027-04-25 | RHD4ENSDZ6APPSL170, RHD4CZ6A02SL3400 |  | -150d |
| RHD4CZ6A02SL1200 |  | Installation for RC Base for Lighting Poles for Street Lighting Network - (RD-A-2)-Z6-A02-SL | 2d | 2027-04-26 | 2027-04-27 | RHD4CZ6A02SL1100 |  | -150d |
| RHD4CZ6A02SL1300 |  | Backfill for RC Base for Lighting Poles for Street Lighting Network - (RD-A-2)-Z6-A02-SL | 2d | 2027-04-28 | 2027-04-29 | RHD4CZ6A02SL1200 |  | -150d |
| RHD4CZ6A02SL1400 |  | Installation for Lighting Poles for Street Lighting Network - (RD-A-2)-Z6-A02-SL | 2d | 2027-05-01 | 2027-05-02 | RHD4CZ6A02SL1300, RHD4CZ6A02SL3400, RHD4PRSHLDOSSL1200, RHD4ENMSSL2000, RHD4ENMSSL2010, RHD4PRSHLSTAGSL1200 |  | -150d |
| RHD4CZ6A02SL1500 |  | Luminaire Installation for Lighting Poles for Street Lighting Network - (RD-A-2)-Z6-A02-SL | 2d | 2027-05-05 | 2027-05-06 | RHD4CZ6A02SL1400, RHD4CZ6A02SL6100, RHD4PRSHLDOSSL1300, RHD4PRSHLSTAGSL1300 |  | -150d |
|  | 5213 | **RHD4-02-002-A02-(SL)-Street Lighting Earthing System** |  | 2027-05-03 | 2027-05-04 |  |  |  |
| RHD4CZ6A02SL6100 |  | Installation of Earthing for Lighting Poles and Fedder Pillers for Street Lighting Network - (RD-A-2)-Z6-A02-SL | 2d | 2027-05-03 | 2027-05-04 | RHD4CZ6A02SL1400, RHD4ENMSER2000, RHD4ENMSER2010 |  | -150d |
|  | 5219 | **RHD4-02-002-Z6-A02-Telecommunications Network - TC** |  | 2027-05-08 | 2027-05-20 |  |  |  |
|  | 5220 | **RHD4-02-002-A02-(TC)-Telecommunications Ducts** |  | 2027-05-08 | 2027-05-20 |  |  |  |
| RHD4CZ6A02TC2100 |  | Excavation of HDPE Ducts for Telecom Network - (RD-A-2)-Z6-A02-TC | 2d | 2027-05-08 | 2027-05-09 | RHD4ENSDZ6APPTC190, RHD4CZ6A02SL1500 |  | -144d |
| RHD4CZ6A02TC2200 |  | Installation of HDPE Ducts for Telecom Network - (RD-A-2)-Z6-A02-TC | 3d | 2027-05-10 | 2027-05-12 | RHD4CZ6A02TC2100, RHD4PRSHLDOSTC1000, RHD4PRSHLSTAGTC1000 |  | -143d |
| RHD4CZ6A02TC2400 |  | Backfilling of HDPE Ducts for Telecom Network - (RD-A-2)-Z6-A02-TC | 2d | 2027-05-19 | 2027-05-20 | RHD4CZ6A02TC2200, RHD4CZ6A02TC5200 |  | -144d |
|  | 5221 | **RHD4-02-002-A02-(TC)-Telecommunications Manholes** |  | 2027-05-10 | 2027-05-13 |  |  |  |
| RHD4CZ6A02TC5100 |  | Excavation for Manholes for Telecom Network - (RD-A-2)-Z6-A02-TC | 2d | 2027-05-10 | 2027-05-11 | RHD4CZ6A02TC2100, RHD4ENSDZ6APPTC190 |  | -144d |
| RHD4CZ6A02TC5200 |  | Installation of Manholes for Telecom Network - (RD-A-2)-Z6-A02-TC | 2d | 2027-05-12 | 2027-05-13 | RHD4CZ6A02TC5100, RHD4CZ6A02TC2200 SS, RHD4PRSHLDOSTC1200, RHD4PRSHLSTAGTC1200 |  | -144d |

| ID | WBS | Task | Duration | Start | Finish | Predecessors | Complete | Total float |
| --- | --- | --- | --- | --- | --- | --- | --- | --- |
|  | 5223 | **RHD4-02-002-Z6-A02-Information and Communication Technologies - ICT** |  | 2027-05-22 | 2027-06-01 |  |  |  |
|  | 5224 | **RHD4-02-002-A02-(ICT)-Information and Communication Technologies Ducts** |  | 2027-05-22 | 2027-06-01 |  |  |  |
| RHD4CZ6A02ICT2100 |  | Excavation of HDPE Ducts for ICT Network - (RD-A-2)-Z6-A02-ICT | 3d | 2027-05-22 | 2027-05-24 | RHD4ENSDZ6APPICT200, RHD4CZ6A02TC2400 |  | -144d |
| RHD4CZ6A02ICT2200 |  | Installation of HDPE Ducts for ICT Network - (RD-A-2)-Z6-A02-ICT | 4d | 2027-05-25 | 2027-05-29 | RHD4CZ6A02ICT2100, RHD4PRSHLDOSICT1000, RHD4PRSHLSTAGICT1000 |  | -144d |
| RHD4CZ6A02ICT2400 |  | Backfilling of HDPE Ducts for ICT Network - (RD-A-2)-Z6-A02-ICT | 3d | 2027-05-30 | 2027-06-01 | RHD4CZ6A02ICT2200, RHD4CZ6A02ICT5200 |  | -144d |
|  | 5225 | **RHD4-02-002-A02-(ICT)-Information and Communication Technologies Manholes** |  | 2027-05-25 | 2027-05-29 |  |  |  |
| RHD4CZ6A02ICT5100 |  | Excavation for Manholes for ICT Network - (RD-A-2)-Z6-A02-ICT | 2d | 2027-05-25 | 2027-05-26 | RHD4CZ6A02ICT2100, RHD4ENSDZ6APPICT200 |  | -144d |
| RHD4CZ6A02ICT5200 |  | Installation of Manholes for ICT Network - (RD-A-2)-Z6-A02-ICT | 2d | 2027-05-27 | 2027-05-29 | RHD4CZ6A02ICT5100, RHD4PRSHLDOSICT1200, RHD4PRSHLSTAGICT1200 |  | -144d |
|  | 5214 | **RHD4-02-002-Z6-A02-Landscape Network - LS** |  |  |  |  |  |  |
|  | 5215 | **RHD4-02-002-A02-(LS)-Landscape Lighting cables** |  |  |  |  |  |  |
|  | 5216 | **RHD4-02-002-A02-(LS)-Landscape Feeder Pillars** |  |  |  |  |  |  |
|  | 5217 | **RHD4-02-002-A02-(LS)-Landscape Bollard Poles** |  |  |  |  |  |  |
|  | 5218 | **RHD4-02-002-A02-(LS)-Landscape Feeder Pillars Earthing** |  |  |  |  |  |  |
|  | 5227 | **RHD4-02-002-Z6-A02-Security Network - CCTV** |  | 2027-06-22 | 2027-07-05 |  |  |  |
|  | 5228 | **RHD4-02-002-A02-(CCTV)-Civil Works** |  |  |  |  |  |  |
|  | 5229 | **RHD4-02-002-A02-(CCTV)-CCTV Poles** |  | 2027-06-22 | 2027-06-30 |  |  |  |
| RHD4CZ6A02CCTV1100 |  | Excavation for RC Base for CCTV Poles for Security Network - (RD-A-2)-Z6-A02-CCTV | 2d | 2027-06-22 | 2027-06-23 | RHD4ENSDZ6APPCCTV210, RHD4CZ6A02ICT2400, RHD4CZ6C052MV4200, RHD4CZ6C052MV3401, RHD4CZ6C052MV3400 |  | -161d |
| RHD4CZ6A02CCTV1200 |  | Installation for RC Base for CCTV Poles for Security Network - (RD-A-2)-Z6-A02-CCTV | 2d | 2027-06-24 | 2027-06-26 | RHD4CZ6A02CCTV1100 |  | -161d |
| RHD4CZ6A02CCTV1300 |  | Backfill for RC Base for CCTV Poles for Security Network - (RD-A-2)-Z6-A02-CCTV | 2d | 2027-06-27 | 2027-06-28 | RHD4CZ6A02CCTV1200 |  | -161d |
| RHD4CZ6A02CCTV1400 |  | Installation for CCTV Poles for Security Network - (RD-A-2)-Z6-A02-CCTV | 2d | 2027-06-29 | 2027-06-30 | RHD4CZ6A02CCTV1300, RHD4PRSHLDOSCCTV1000, RHD4PRSHLSTACCTV1000 |  | -161d |
|  | 5230 | **RHD4-02-002-A02-(CCTV)-Camera** |  | 2027-07-01 | 2027-07-03 |  |  |  |
| RHD4CZ6A02CCTV3100 |  | Installation for Cameras for Security Network - (RD-A-2)-Z6-A02-CCTV | 2d | 2027-07-01 | 2027-07-03 | RHD4CZ6A02CCTV1400, RHD4PRSHLDOSCCTV1100, RHD4PRSHLSTACCTV1100 |  | -161d |
|  | 5231 | **RHD4-02-002-A02-(CCTV)-Power and Infrastructure** |  |  |  |  |  |  |
|  | 5233 | **RHD4-02-002-A02-(CCTV)-CCTV Panels and Components** |  | 2027-07-04 | 2027-07-05 |  |  |  |
| RHD4CZ6A02CCTV6100 |  | Installation for CCTV Panels for Security Network - (RD-A-2)-Z6-A02-CCTV | 2d | 2027-07-04 | 2027-07-05 | RHD4CZ6A02CCTV3100, RHD4PRSHLDOSCCTV1200, RHD4PRSHLSTACCTV1200, RHD4PRLOLSTACCTV1001 |  | -161d |
|  | 5433 | **RHD4-02-002-Z6-RA01** |  | 2026-04-25 | 2027-09-05 |  |  |  |
|  | 5612 | **RHD4-02-002-Z6-RA01-Road Works - RD** |  | 2026-04-25 | 2027-09-05 |  |  |  |
|  | 5613 | **RHD4-02-002-RA01-(RD)-Subgrade** |  | 2026-04-25 | 2026-05-23 |  |  |  |
| RHD4CZ6RA01RD1100 |  | Supply, lay and compaction subgrade compacted thickness 300 mm for Roads - (ROUND-01)-Z6-RA01-RD | 4d | 2026-04-25 A | 2026-05-23 A | RHD4ENSDZ6APPRD220, RHD4ENSDZ6APPEW100, RHD4CZ6A02RD1100 SS | 100% |  |
|  | 5614 | **RHD4-02-002-RA01-(RD)-Aggregate Base Course** |  | 2027-01-28 | 2027-02-01 |  |  |  |
| RHD4CZ6RA01RD2100 |  | Supply, lay and compaction Aggregate base course compacted thickness 300 mmfor Roads - (ROUND-01)-Z6-RA01-RD | 4d | 2027-01-28 | 2027-02-01 | RHD4CZ6RA01RD1100 |  | -139d |
|  | 5615 | **RHD4-02-002-RA01-(RD)-Bituminous base course Two Layers, including (MC1)&(RC2)** |  | 2027-03-08 | 2027-08-12 |  |  |  |
| RHD4CZ6RA01RD3100 |  | Supply, lay and Asphaltic base course including Prime Coat (MC1) for 1st Layer - (ROUND-01)-Z6-RA01-RD | 2d | 2027-03-08 | 2027-03-13 | RHD4CZ6RA01RD2100, RHD4ENMSASPH2000, RHD4ENMSASPH2010, RHD4CZ6C062RD3100 |  | -167d |
| RHD4CZ6RA01RD3200 |  | Supply, lay and Asphaltic base course including Tack Coat (RC2) for 2nd Layer - (ROUND-01)-Z6-RA01-RD | 2d | 2027-08-11 | 2027-08-12 | RHD4CZ6RA01CCTV5200 |  | -150d |
|  | 5617 | **RHD4-02-002-RA01-(RD)-Precast Concrete Curb** |  | 2027-08-14 | 2027-08-16 |  |  |  |
| RHD4CZ6RA01RD5100 |  | Supply and installation Precast Concrete Kerb for Roads - (ROUND-01)-Z6-RA01-RD | 3d | 2027-08-14 | 2027-08-16 | RHD4CZ6RA01RD3200, RHD4ENMSRD2000, RHD4ENMSRD2010 |  | -150d |
|  | 5620 | **RHD4-02-002-RA01-(RD)-Traffic Signage** |  | 2027-08-17 | 2027-08-28 |  |  |  |
| RHD4CZ6RA01RD8100 |  | Installation of Traffic Signage for Road Network - (ROUND-01)-Z6-RA01-RD | 10d | 2027-08-17 | 2027-08-28 | RHD4CZ6RA01RD5100 |  | -145d |
|  | 5618 | **RHD4-02-002-RA01-(RD)-Precast Interlocking Block Pavers** |  |  |  |  |  |  |
|  | 5616 | **RHD4-02-002-RA01-(RD)-Bituminous concrete wearing course including tack coat (RC2)** |  | 2027-08-17 | 2027-08-18 |  |  |  |
| RHD4CZ6RA01RD4100 |  | Supply, lay and compaction Asphaltic wearing course including tack Coat (RC2)for Road Network - (ROUND-01)-Z6-RA01-RD | 2d | 2027-08-17 | 2027-08-18 | RHD4CZ6RA01RD5100 |  | -150d |
|  | 5619 | **RHD4-02-002-RA01-(RD)-Pavement Marking** |  | 2027-08-19 | 2027-09-05 |  |  |  |
| RHD4CZ6RA01RD7100 |  | Pavement Markings for Road Network - (ROUND-01)-Z6-RA01-RD | 5d | 2027-08-19 | 2027-08-24 | RHD4CZ6RA01RD4100 |  | -150d |
| RHD4CZ6RA01RD9100 |  | Installation for Speed Bump for Road Network - (ROUND-01)-Z6-RA01-RD | 10d | 2027-08-25 | 2027-09-05 | RHD4CZ6RA01RD7100 |  | -150d |
|  | 5585 | **RHD4-02-002-Z6-RA01-Street Lighting Network - SL** |  | 2027-05-08 | 2027-06-14 |  |  |  |
|  | 5586 | **RHD4-02-002-RA01-(SL)-Street Lighting duct banks** |  | 2027-05-08 | 2027-05-22 |  |  |  |
| RHD4CZ6RA01SL2100 |  | Excavation of Duct Banks for Street Lighting Network - (ROUND-01)-Z6-RA01-SL | 2d | 2027-05-08 | 2027-05-09 | RHD4CZ6RA01RA3000, RHD4ENSDZ6APPSL170, RHD4CZ6C052MV2100, RHD4CZ6A02SL1500 |  | -150d |
| RHD4CZ6RA01SL2200 |  | Installation of Duct Banks for Street Lighting Network - (ROUND-01)-Z6-RA01-SL | 3d | 2027-05-10 | 2027-05-12 | RHD4CZ6RA01SL2100 |  | -150d |
| RHD4CZ6RA01SL2300 |  | Pouring of Duct Banks for Street Lighting Network - (ROUND-01)-Z6-RA01-SL | 2d | 2027-05-13 | 2027-05-19 | RHD4CZ6RA01SL2200 |  | -150d |
| RHD4CZ6RA01SL2400 |  | Backfilling of Duct Banks for Street Lighting Network - (ROUND-01)-Z6-RA01-SL | 2d | 2027-05-20 | 2027-05-22 | RHD4CZ6RA01SL2300 |  | -148d |
|  | 5587 | **RHD4-02-002-RA01-(SL)-Street Lighting Drawpit** |  | 2027-05-20 | 2027-05-24 |  |  |  |
| RHD4CZ6RA01SL5100 |  | Excavation of Drawpit size 600x600x900mm for Street Lighting Network - (ROUND-01)-Z6-RA01-SL | 2d | 2027-05-20 | 2027-05-22 | RHD4CZ6RA01SL2300, RHD4ENSDZ6APPSL170, RHD4CZ6RA01RD3100 |  | -150d |
| RHD4CZ6RA01SL5200 |  | Installation of Drawpit size 600x600x900mm for Street Lighting Network - (ROUND-01)-Z6-RA01-SL | 2d | 2027-05-23 | 2027-05-24 | RHD4CZ6RA01SL5100, RHD4PRSHLDOSSL1400, RHD4PRSHLSTAGSL1400 |  | -150d |
|  | 5588 | **RHD4-02-002-RA01-(SL)-Street Lighting cables** |  | 2027-05-25 | 2027-06-02 |  |  |  |
| RHD4CZ6RA01SL3100 |  | Excavation for Street Lighting Cables for Street Lighting Network - (ROUND-01)-Z6-RA01-SL | 2d | 2027-05-25 | 2027-05-26 | RHD4ENSDZ6APPSL170, RHD4CZ6RA01SL5200, RHD4CZ6RA01SL2400 |  | -150d |
| RHD4CZ6RA01SL3200 |  | Cable Laying of Street Lighting Cables for Street Lighting Network - (ROUND-01)-Z6-RA01-SL | 2d | 2027-05-27 | 2027-05-29 | RHD4CZ6RA01SL3100, RHD4ENMSSL2000, RHD4ENMSSL2010 |  | -150d |
| RHD4CZ6RA01SL3300 |  | Warning tape and Backfill for Street Lighting Cables for Street Lighting Network - (ROUND-01)-Z6-RA01-SL | 2d | 2027-05-30 | 2027-05-31 | RHD4CZ6RA01SL3200 |  | -150d |
| RHD4CZ6RA01SL3400 |  | Testing of Street Lighting Cables for Street Lighting Network - (ROUND-01)-Z6-RA01-SL | 2d | 2027-06-01 | 2027-06-02 | RHD4CZ6RA01SL3300 |  | -150d |
|  | 5589 | **RHD4-02-002-RA01-(SL)-Street Lighting Poles** |  | 2027-06-03 | 2027-06-14 |  |  |  |
| RHD4CZ6RA01SL1100 |  | Excavation for RC Base for Lighting Poles for Street Lighting Network - (ROUND-01)-Z6-RA01-SL | 2d | 2027-06-03 | 2027-06-05 | RHD4ENSDZ6APPSL170, RHD4CZ6RA01SL3400 |  | -150d |
| RHD4CZ6RA01SL1200 |  | Installation for RC Base for Lighting Poles for Street Lighting Network - (ROUND-01)-Z6-RA01-SL | 2d | 2027-06-06 | 2027-06-07 | RHD4CZ6RA01SL1100 |  | -150d |
| RHD4CZ6RA01SL1300 |  | Backfill for RC Base for Lighting Poles for Street Lighting Network - (ROUND-01)-Z6-RA01-SL | 2d | 2027-06-08 | 2027-06-09 | RHD4CZ6RA01SL1200 |  | -150d |
| RHD4CZ6RA01SL1400 |  | Installation for Lighting Poles for Street Lighting Network - (ROUND-01)-Z6-RA01-SL | 2d | 2027-06-10 | 2027-06-12 | RHD4CZ6RA01SL1300, RHD4CZ6RA01SL3400, RHD4ENMSSL2000, RHD4ENMSSL2010 |  | -150d |
| RHD4CZ6RA01SL1500 |  | Luminaire Installation for Lighting Poles for Street Lighting Network - (ROUND-01)-Z6-RA01-SL | 2d | 2027-06-13 | 2027-06-14 | RHD4CZ6RA01SL1400 |  | -150d |
|  | 5024 | **RHD4-02-002-RA01-(SL)-Street Lighting Earthing System** |  |  |  |  |  |  |
|  | 5597 | **RHD4-02-002-Z6-RA01-Telecommunications Network - TC** |  | 2027-06-15 | 2027-06-30 |  |  |  |
|  | 5598 | **RHD4-02-002-RA01-(TC)-Telecommunications Ducts** |  | 2027-06-15 | 2027-06-21 |  |  |  |
| RHD4CZ6RA01TC2100 |  | Excavation of HDPE Ducts for Telecom Network - (ROUND-01)-Z6-RA01-TC | 2d | 2027-06-15 | 2027-06-16 | RHD4ENSDZ6APPTC190, RHD4CZ6RA01SL1500 |  | -150d |
| RHD4CZ6RA01TC2200 |  | Installation of HDPE Ducts for Telecom Network - (ROUND-01)-Z6-RA01-TC | 2d | 2027-06-17 | 2027-06-19 | RHD4CZ6RA01TC2100, RHD4PRSHLDOSTC1000, RHD4PRSHLSTAGTC1000 |  | -150d |
| RHD4CZ6RA01TC2400 |  | Backfilling of HDPE Ducts for Telecom Network - (ROUND-01)-Z6-RA01-TC | 2d | 2027-06-20 | 2027-06-21 | RHD4CZ6RA01TC2200 |  | -150d |

| ID | WBS | Task | Duration | Start | Finish | Predecessors | Complete | Total float |
| --- | --- | --- | --- | --- | --- | --- | --- | --- |
|  | 491 | **RHD4-02-002-RA01-(TC)-Telecommunications Manholes** |  | 2027-06-22 | 2027-06-30 |  |  |  |
| RHD4CZ6RA01TC5100 |  | Excavation for Manholes for Telecom Network - (ROUND-01)-Z6-RA01-TC | 4d | 2027-06-22 | 2027-06-26 | RHD4CZ6RA01TC2400 |  | -147d |
| RHD4CZ6RA01TC5200 |  | Installation of Manholes for Telecom Network - (ROUND-01)-Z6-RA01-TC | 4d | 2027-06-27 | 2027-06-30 | RHD4CZ6RA01TC5100 |  | -147d |
|  | 5412 | **RHD4-02-002-Z6-RA01-Information and Communication Technologies - ICT** |  |  |  |  |  |  |
|  | 5413 | **RHD4-02-002-RA01-(ICT)-Information and Communication Technologies Ducts** |  |  |  |  |  |  |
|  | 5414 | **RHD4-02-002-RA01-(ICT)-Information and Communication Technologies Manholes** |  |  |  |  |  |  |
|  | 5592 | **RHD4-02-002-Z6-RA01-Landscape Network - LS** |  |  |  |  |  |  |
|  | 5593 | **RHD4-02-002-RA01-(LS)-Landscape Lighting cables** |  |  |  |  |  |  |
|  | 5594 | **RHD4-02-002-RA01-(LS)-Landscape Feeder Pillars** |  |  |  |  |  |  |
|  | 5595 | **RHD4-02-002-RA01-(LS)-Landscape Bollard Poles** |  |  |  |  |  |  |
|  | 5596 | **RHD4-02-002-RA01-(LS)-Landscape Feeder Pillars Earthing** |  |  |  |  |  |  |
|  | 5605 | **RHD4-02-002-Z6-RA01-Security Network - CCTV** |  | 2027-06-22 | 2027-08-10 |  |  |  |
|  | 5606 | **RHD4-02-002-RA01-(CCTV)-Civil Works** |  | 2027-06-22 | 2027-07-04 |  |  |  |
| RHD4CZ6RA01CCTV2100 |  | Civil Works for Security Network - (ROUND-01)-Z6-RA01-CCTV | 11d | 2027-06-22 | 2027-07-04 | RHD4CZ6RA01TC2400 |  | -150d |
|  | 5607 | **RHD4-02-002-RA01-(CCTV)-CCTV Poles** |  | 2027-07-05 | 2027-07-15 |  |  |  |
| RHD4CZ6RA01CCTV1100 |  | Excavation for RC Base for CCTV Poles for Security Network - (ROUND-01)-Z6-RA01-CCTV | 2d | 2027-07-05 | 2027-07-06 | RHD4CZ6RA01CCTV2100, RHD4ENSDZ6APPCCTV210, RHD4CZ6RA01TC5200 |  | -150d |
| RHD4CZ6RA01CCTV1200 |  | Installation for RC Base for CCTV Poles for Security Network - (ROUND-01)-Z6-RA01-CCTV | 2d | 2027-07-07 | 2027-07-08 | RHD4CZ6RA01CCTV1100 |  | -150d |
| RHD4CZ6RA01CCTV1300 |  | Backfill for RC Base for CCTV Poles for Security Network - (ROUND-01)-Z6-RA01-CCTV | 2d | 2027-07-10 | 2027-07-11 | RHD4CZ6RA01CCTV1200 |  | -150d |
| RHD4CZ6RA01CCTV1400 |  | Installation for CCTV Poles for Security Network - (ROUND-01)-Z6-RA01-CCTV | 2d | 2027-07-12 | 2027-07-13 | RHD4CZ6RA01CCTV1300, RHD4PRSHLDOSCCTV1000, RHD4PRSHLSTACCTV1000 |  | -150d |
| RHD4CZ6RA01CCTV1500 |  | Protection post Installation for CCTV Poles for Security Network - (ROUND-01)-Z6-RA01-CCTV | 2d | 2027-07-14 | 2027-07-15 | RHD4CZ6RA01CCTV1400 |  | -145d |
|  | 5608 | **RHD4-02-002-RA01-(CCTV)-Camera** |  | 2027-07-17 | 2027-07-18 |  |  |  |
| RHD4CZ6RA01CCTV3100 |  | Installation for Cameras for Security Network - (ROUND-01)-Z6-RA01-CCTV | 2d | 2027-07-17 | 2027-07-18 | RHD4CZ6RA01CCTV1400, RHD4CZ6RA01CCTV4100, RHD4PRSHLDOSCCTV1100, RHD4PRSHLSTACCTV1100 |  | -150d |
|  | 5609 | **RHD4-02-002-RA01-(CCTV)-Power and Infrastructure** |  | 2027-07-14 | 2027-07-25 |  |  |  |
| RHD4CZ6RA01CCTV4100 |  | Installation of Power outlet, UPS and midspan for PTZ Camerafor Cameras for Security Network - (ROUND-01)-Z6-RA01-CCTV | 2d | 2027-07-14 | 2027-07-15 | RHD4CZ6RA01CCTV1400, RHD4PRSHLDOSCCTV1300, RHD4PRSHLSTACCTV1300 |  | -150d |
| RHD4CZ6RA01CCTV4200 |  | Short Range Wireless PoP wireless Bridgefor CCTV Poles for Security Network - (ROUND-01)-Z6-RA01-CCTV | 2d | 2027-07-17 | 2027-07-18 | RHD4CZ6RA01CCTV4100 |  | -150d |
| RHD4CZ6RA01CCTV4300 |  | Fiber Optic Cables for 35m height Pole to Main data Center for CCTV Pole for Security Network - (ROUND-01)-Z6-RA01-CCTV | 6d | 2027-07-19 | 2027-07-25 | RHD4CZ6RA01CCTV4200, RHD4CZ6RA01CCTV3100 |  | -150d |
|  | 5610 | **RHD4-02-002-RA01-(CCTV)-Control Room Equipment** |  | 2027-07-31 | 2027-08-10 |  |  |  |
| RHD4CZ6RA01CCTV5100 |  | Installation for Control room Equipment for Security Network - (ROUND-01)-Z6-RA01-CCTV | 8d | 2027-07-31 | 2027-08-08 | RHD4CZ6RA01CCTV6100 |  | -150d |
| RHD4CZ6RA01CCTV5200 |  | Installation of Access Control for Control Room for Security Network - (ROUND-01)-Z6-RA01-CCTV | 2d | 2027-08-09 | 2027-08-10 | RHD4CZ6RA01CCTV5100 |  | -150d |
|  | 5611 | **RHD4-02-002-RA01-(CCTV)-CCTV Panels and Components** |  | 2027-07-26 | 2027-07-29 |  |  |  |
| RHD4CZ6RA01CCTV6100 |  | Installation for CCTV Panels for Security Network - (ROUND-01)-Z6-RA01-CCTV | 4d | 2027-07-26 | 2027-07-29 | RHD4CZ6RA01CCTV4200, RHD4PRSHLDOSCCTV1200, RHD4PRSHLSTACCTV1200, RHD4PRLOLSTACCTV1001, RHD4CZ6RA01CCTV4300 |  | -150d |
|  | 3352 | **RHD4-02-002-Z5** |  | 2026-04-16 | 2028-07-08 |  |  |  |
|  | 3920 | **RHD4-02-002-Z5-C051** |  | 2026-04-16 | 2027-11-28 |  |  |  |
|  | 3951 | **RHD4-02-002-Z5-C051-Crossings Sewage Network - SWCr** |  |  |  |  |  |  |
|  | 3961 | **RHD4-02-002-C051-(SWCr)-MH Works - 1200 mm diameter** |  |  |  |  |  |  |
|  | 3957 | **RHD4-02-002-C051-(SWCr)-UPVC Pipes - 200 mm diameter** |  |  |  |  |  |  |
|  | 3995 | **RHD4-02-002-Z5-C051-Crossings Potable Network - PTCr** |  |  |  |  |  |  |
|  | 3996 | **RHD4-02-002-C051-(PTCr)-HDPE Pipes - 110 mm diameter** |  |  |  |  |  |  |
|  | 4001 | **RHD4-02-002-C051-(PTCr)-Gate Valves (Direct Buried)** |  |  |  |  |  |  |
|  | 4008 | **RHD4-02-002-C051-(PTCr)-Fire Hydrant** |  |  |  |  |  |  |
|  | 4042 | **RHD4-02-002-Z5-C051-Crossings Irrigation Network - IRRC** |  |  |  |  |  |  |
|  | 4043 | **RHD4-02-002-C051-(IRRC)-HDPE Pipes - 160 mm diameter** |  |  |  |  |  |  |
|  | 4051 | **RHD4-02-002-C051-(IRRC)-Gate Valves (Direct Buried)** |  |  |  |  |  |  |
|  | 4099 | **RHD4-02-002-Z5-C051-Road Works - RD** |  | 2026-04-16 | 2027-11-28 |  |  |  |
|  | 4100 | **RHD4-02-002-C051-(RD)-Subgrade** |  | 2026-04-16 | 2026-05-23 |  |  |  |
| RHD4CZ5C051RD1100 |  | Supply, lay and compaction subgrade compacted thickness 300 mm for Roads - (RD-C-5 /1)-Z5-C051-RD | 11d | 2026-04-16 A | 2026-05-23 A | RHD4ENSDZ5APPRD220, RHD4ENSDZ5APPEW100 SS, RHD4CZ5C051ST3301, RHD4CZ5C051ST3300, RHD4CZ5C051ICT3400, RHD4CZ5C051TC3400 | 100% |  |
|  | 4101 | **RHD4-02-002-C051-(RD)-Aggregate Base Course** |  | 2027-02-14 | 2027-02-18 |  |  |  |
| RHD4CZ5C051RD2100 |  | Supply, lay and compaction Aggregate base course compacted thickness 300 mmfor Roads - (RD-C-5 /1)-Z5-C051-RD | 5d | 2027-02-14 | 2027-02-18 | RHD4CZ5C051RD1100, RHD4PRSHLDOSRD1000, RHD4PRSHLSTAGRD1000 |  | -142d |
|  | 4102 | **RHD4-02-002-C051-(RD)-Bituminous base course Two Layers, including (MC1)&(RC2)** |  | 2027-02-20 | 2027-11-01 |  |  |  |
| RHD4CZ5C051RD3100 |  | Supply, lay and Asphaltic base course including Prime Coat (MC1) for 1st Layer - (RD-C-5 /1)-Z5-C051-RD | 2d | 2027-02-20 | 2027-02-21 | RHD4CZ5C051RD2100, RHD4PRSHLDOSRD1100, RHD4ENMSASPH2000, RHD4ENMSASPH2010, RHD4PRSHLSTAGRD1100 |  | -142d |
| RHD4CZ5C051RD3200 |  | Supply, lay and Asphaltic base course including Tack Coat (RC2) for 2nd Layer - (RD-C-5 /1)-Z5-C051-RD | 2d | 2027-10-31 | 2027-11-01 | RHD4PRSHLDOSRD1100, RHD4PRSHLSTAGRD1100, RHD4CZ5C051CCTV6100 |  | -155d |
|  | 4104 | **RHD4-02-002-C051-(RD)-Precast Concrete Curb** |  | 2027-11-02 | 2027-11-06 |  |  |  |
| RHD4CZ5C051RD5100 |  | Supply and installation Precast Concrete Kerb for Roads - (RD-C-5 /1)-Z5-C051-RD | 4d | 2027-11-02 | 2027-11-06 | RHD4CZ5C051RD3200, RHD4PRSHLDOSRD1200, RHD4ENMSRD2000, RHD4ENMSRD2010, RHD4PRSHLSTAGRD1200 |  | -155d |
|  | 4107 | **RHD4-02-002-C051-(RD)-Traffic Signage** |  | 2027-11-07 | 2027-11-13 |  |  |  |
| RHD4CZ5C051RD8100 |  | Installation of Traffic Signage for Road Network - (RD-C-5 /1)-Z5-C051-RD | 6d | 2027-11-07 | 2027-11-13 | RHD4CZ5C051RD5100, RHD4PRSHLDOSRD1600, RHD4PRSHLSTAGRD1600 |  | -155d |
|  | 4105 | **RHD4-02-002-C051-(RD)-Precast Interlocking Block Pavers** |  | 2027-11-14 | 2027-11-20 |  |  |  |
| RHD4CZ5C051RD6100 |  | Interlocking block pavers for sidewalk-footpath for Side walks and Parking areas - (RD-C-5 /1)-Z5-C051-RD | 6d | 2027-11-14 | 2027-11-20 | RHD4CZ5C051RD8100, RHD4PRSHLDOSRD1300, RHD4PRSHLDOSRD1400, RHD4ENMSRD2000, RHD4ENMSRD2010, RHD4PRSHLSTAGRD1300, RHD4PRSHLSTAGRD1400 |  | -155d |
|  | 4103 | **RHD4-02-002-C051-(RD)-Bituminous concrete wearing course including tack coat (RC2)** |  | 2027-11-21 | 2027-11-22 |  |  |  |
| RHD4CZ5C051RD4100 |  | Supply, lay and compaction Asphaltic wearing course including tack Coat (RC2)for Road Network - (RD-C-5 /1)-Z5-C051-RD | 2d | 2027-11-21 | 2027-11-22 | RHD4CZ5C051RD5100, RHD4CZ5C051RD6100 |  | -155d |
|  | 4108 | **RHD4-02-002-C051-(RD)-Speed Table and Wheel Stopper** |  |  |  |  |  |  |
|  | 4106 | **RHD4-02-002-C051-(RD)-Pavement Marking** |  | 2027-11-23 | 2027-11-28 |  |  |  |
| RHD4CZ5C051RD7100 |  | Pavement Markings for Road Network - (RD-C-5 /1)-Z5-C051-RD | 5d | 2027-11-23 | 2027-11-28 | RHD4CZ5C051RD4100, RHD4PRSHLDOSRD1500, RHD4PRSHLSTAGRD1500 |  | -155d |
|  | 3924 | **RHD4-02-002-Z5-C051-Storm Network - ST** |  | 2026-08-04 | 2027-02-09 |  |  |  |
|  | 3942 | **RHD4-02-002-C051-(ST)-MH Works - 1500 mm diameter** |  | 2026-08-04 | 2027-02-04 |  |  |  |
| RHD4CZ5C051ST3101 |  | Excavation and PC Blinding works for MH 1500 mm - (RD-C-5 /1)-Z5-C051-ST | 3d | 2026-08-04 A | 2026-08-06 A | RHD4CZ5C051RW3000, RHD4ENSDZ5APPST110, RHD4PRSHLSTAGST1604, RHD4CZ6C052ST1103, RHD4PRSHLSTAGST1302, RHD4PRSHLSTAGSL1000 | 100% |  |
| RHD4CZ5C051ST3201 |  | Installation of Base for MH 1500 mm - (RD-C-5 /1)-Z5-C051-ST | 2d | 2026-08-06 A | 2026-08-09 A | RHD4CZ5C051ST3101, RHD4PRSHLSTAGST1604 | 100% |  |
| RHD4CZ5C051ST3301 |  | MH Ring and C.Slab works and Backfilling works for MH 1500 mm - (RD-C-5 /1)-Z5-C051-ST | 2d | 2026-10-01 A | 2027-01-27 | RHD4CZ5C051ST3201, RHD4PRSHLDOSST1604 | 80% | -172d |
| RHD4CZ5C051ST3401 |  | Steel Cover for MH 1500 mm - (RD-C-5 /1)-Z5-C051-ST | 2d | 2027-01-28 | 2027-01-30 | RHD4CZ5C051ST3301, RHD4PRSHLDOSST1704, RHD4PRSHLSTAGST1704 |  | -172d |
| RHD4CZ5C051ST3501 |  | Finishing, Benching, Testing works for MH 1500 mm - (RD-C-5 /1)-Z5-C051-ST | 2d | 2027-02-03 | 2027-02-04 | RHD4CZ5C051ST3401, RHD4CZ5C051ST2500 |  | -174d |
|  | 3941 | **RHD4-02-002-C051-(ST)-MH Works - 1200 mm diameter** |  | 2026-08-04 | 2027-02-09 |  |  |  |

| ID | WBS | Task | Duration | Start | Finish | Predecessors | Complete | Total float |
| --- | --- | --- | --- | --- | --- | --- | --- | --- |
| RHD4CZ5C051ST3100 |  | Excavation and PC Blinding works for MH 1200 mm - (RD-C-5 /1)-Z5-C051-ST | 3d | 2026-08-04 A | 2026-08-05 A | RHD4CZ5C051ST3101 SS, RHD4ENSDZ5APPST110, RHD4ENMSST2000, RHD4ENMSST2010 | 100% |  |
| RHD4CZ5C051ST3200 |  | Installation of Base for MH 1200 mm - (RD-C-5 /1)-Z5-C051-ST | 4d | 2026-08-06 A | 2026-08-13 A | RHD4CZ5C051ST3100, RHD4PRSHLSTAGST1604 | 100% |  |
| RHD4CZ5C051ST3300 |  | MH Ring and C.Slab works and Backfilling works for MH 1200 mm - (RD-C-5 /1)-Z5-C051-ST | 4d | 2026-10-07 A | 2027-01-30 | RHD4CZ5C051ST3200, RHD4PRSHLDOSST1604 | 80% | -172d |
| RHD4CZ5C051ST3400 |  | Steel Cover for MH 1200 mm - (RD-C-5 /1)-Z5-C051-ST | 3d | 2027-02-03 | 2027-02-06 | RHD4CZ5C051ST3300, RHD4CZ5C051ST2500, RHD4PRSHLDOSST1704, RHD4PRSHLSTAGST1704, RHD4CZ5C051ST3401 |  | -175d |
| RHD4CZ5C051ST3500 |  | Finishing, Benching, Testing works for MH 1200 mm - (RD-C-5 /1)-Z5-C051-ST | 3d | 2027-02-07 | 2027-02-09 | RHD4CZ5C051ST3400, RHD4CZ5C051ST3501 |  | -175d |
|  | 3930 | **RHD4-02-002-C051-(ST)-GRP Pipes - 900 mm diameter** |  |  |  |  |  |  |
|  | 3928 | **RHD4-02-002-C051-(ST)-GRP Pipes - 700 mm diameter** |  | 2026-08-04 | 2026-09-20 |  |  |  |
| RHD4CZ5C051ST1103 |  | Excavation works for GRP Pipe Line 700 mm - (RD-C-5 /1)-Z5-C051-ST | 2d | 2026-08-04 A | 2026-08-05 A | RHD4ENSDZ5APPST110, RHD4CZ5C051ST3100 | 100% |  |
| RHD4CZ5C051ST1403 |  | Primary Test for GRP Pipe Line 700 mm - (RD-C-5 /1)-Z5-C051-ST | 2d | 2026-08-04 A | 2026-09-20 A | RHD4CZ5C051ST1303 | 100% |  |
| RHD4CZ5C051ST1203 |  | Bedding works for GRP Pipe Line 700 mm - (RD-C-5 /1)-Z5-C051-ST | 2d | 2026-08-06 A | 2026-08-08 A | RHD4CZ5C051ST1103 | 100% |  |
| RHD4CZ5C051ST1303 |  | Installing for GRP Pipe Line 700 mm - (RD-C-5 /1)-Z5-C051-ST | 2d | 2026-08-09 A | 2026-08-10 A | RHD4CZ5C051ST1203, RHD4PRSHLSTAGST1004, RHD4PRSHLDOSST1604, RHD4PRSHLPOST1000, RHD4PRSHLDOSST1004 | 100% |  |
| RHD4CZ5C051ST1503 |  | Backfilling and warning tape works for GRP Pipe Line 700 mm - (RD-C-5 /1)-Z5-C051-ST | 2d | 2026-08-11 A | 2026-08-12 A | RHD4CZ5C051ST1403 | 100% |  |
|  | 3927 | **RHD4-02-002-C051-(ST)-GRP Pipes - 600 mm diameter** |  | 2026-08-04 | 2027-02-02 |  |  |  |
| RHD4CZ5C051ST1102 |  | Excavation works for GRP Pipe Line 600 mm - (RD-C-5 /1)-Z5-C051-ST | 3d | 2026-08-04 A | 2026-09-19 A | RHD4CZ5C051ST1103, RHD4ENSDZ5APPST110 | 100% |  |
| RHD4CZ5C051ST1202 |  | Bedding works for GRP Pipe Line 600 mm - (RD-C-5 /1)-Z5-C051-ST | 3d | 2026-08-06 A | 2026-09-20 A | RHD4CZ5C051ST1102 | 100% |  |
| RHD4CZ5C051ST1302 |  | Installing for GRP Pipe Line 600 mm - (RD-C-5 /1)-Z5-C051-ST | 3d | 2026-08-09 A | 2026-09-21 A | RHD4CZ5C051ST1202, RHD4PRSHLSTAGST1004, RHD4PRSHLDOSST1604, RHD4PRSHLPOST1000, RHD4PRSHLDOSST1004 | 100% |  |
| RHD4CZ5C051ST1502 |  | Backfilling and warning tape works for GRP Pipe Line 600 mm - (RD-C-5 /1)-Z5-C051-ST | 3d | 2026-08-11 A | 2026-09-22 A | RHD4CZ5C051ST1402 | 100% |  |
| RHD4CZ5C051ST1402 |  | Primary Test for GRP Pipe Line 600 mm - (RD-C-5 /1)-Z5-C051-ST | 3d | 2026-09-19 A | 2027-02-02 | RHD4CZ5C051ST1302 | 30% | -175d |
|  | 2413 | **RHD4-02-002-C051-(ST)-GRP Pipes - 500 mm diameter** |  | 2026-08-04 | 2026-09-20 |  |  |  |
| RHD4CZ5C051ST1101 |  | Excavation works for GRP Pipe Line 500 mm - (RD-C-5 /1)-Z5-C051-ST | 2d | 2026-08-04 A | 2026-08-05 A | RHD4CZ5C051ST1102 | 100% |  |
| RHD4CZ5C051ST1201 |  | Bedding works for GRP Pipe Line 500 mm - (RD-C-5 /1)-Z5-C051-ST | 2d | 2026-08-06 A | 2026-08-08 A | RHD4CZ5C051ST1101 | 100% |  |
| RHD4CZ5C051ST1301 |  | Installing for GRP Pipe Line 500 mm - (RD-C-5 /1)-Z5-C051-ST | 2d | 2026-08-09 A | 2026-08-10 A | RHD4CZ5C051ST1201 | 100% |  |
| RHD4CZ5C051ST1501 |  | Backfilling and warning tape works for GRP Pipe Line 500 mm - (RD-C-5 /1)-Z5-C051-ST | 2d | 2026-08-11 A | 2026-08-12 A | RHD4CZ5C051ST1401 | 100% |  |
| RHD4CZ5C051ST1401 |  | Primary Test for GRP Pipe Line 500 mm - (RD-C-5 /1)-Z5-C051-ST | 2d | 2026-09-19 A | 2026-09-20 A | RHD4CZ5C051ST1301 | 100% |  |
|  | 2994 | **RHD4-02-002-C051-(ST)-UPVC Pipes - 400 mm diameter** |  | 2026-08-04 | 2027-01-27 |  |  |  |
| RHD4CZ5C051ST2101 |  | Excavation works for UPVC Pipe Line 400 mm - (RD-C-5 /1)-Z5-C051-ST | 2d | 2026-08-04 A | 2026-08-05 A | RHD4CZ5C051ST1103 | 100% |  |
| RHD4CZ5C051ST2201 |  | Bedding works for UPVC Pipe Line 400 mm - (RD-C-5 /1)-Z5-C051-ST | 2d | 2026-08-06 A | 2026-08-08 A | RHD4CZ5C051ST2101 | 100% |  |
| RHD4CZ5C051ST2301 |  | Installing for UPVC Pipe Line 400 mm - (RD-C-5 /1)-Z5-C051-ST | 2d | 2026-08-09 A | 2026-08-10 A | RHD4CZ5C051ST2201 | 100% |  |
| RHD4CZ5C051ST2501 |  | Backfilling and warning tape works for UPVC Pipe Line 400 mm - (RD-C-5 /1)-Z5-C051-ST | 2d | 2026-08-11 A | 2026-08-12 A | RHD4CZ5C051ST2401 | 100% |  |
| RHD4CZ5C051ST2401 |  | Primary Test for UPVC Pipe Line 400 mm - (RD-C-5 /1)-Z5-C051-ST | 2d | 2027-01-26 | 2027-01-27 | RHD4CZ5C051ST2301 |  | -172d |
|  | 3939 | **RHD4-02-002-C051-(ST)-UPVC Pipes - 300 mm diameter** |  | 2026-08-04 | 2027-01-30 |  |  |  |
| RHD4CZ5C051ST2100 |  | Excavation works for UPVC Pipe Line 300 mm - (RD-C-5 /1)-Z5-C051-ST | 3d | 2026-08-04 A | 2026-08-06 A | RHD4ENSDZ5APPST110, RHD4CZ5C051ST2101 SS | 100% |  |
| RHD4CZ5C051ST2200 |  | Bedding works for UPVC Pipe Line 300 mm - (RD-C-5 /1)-Z5-C051-ST | 3d | 2026-08-08 A | 2026-08-10 A | RHD4CZ5C051ST2100 | 100% |  |
| RHD4CZ5C051ST2300 |  | Installing for UPVC Pipe Line 300 mm - (RD-C-5 /1)-Z5-C051-ST | 3d | 2026-08-11 A | 2026-08-13 A | RHD4CZ5C051ST2200, RHD4PRSHLDOSST1104, RHD4PRSHLSTAGST1104, RHD4CZ5C051ST2501 | 100% |  |
| RHD4CZ5C051ST2500 |  | Backfilling and warning tape works for UPVC Pipe Line 300 mm - (RD-C-5 /1)-Z5-C051-ST | 3d | 2026-08-15 A | 2026-08-17 A | RHD4CZ5C051ST2400, RHD4CZ5C051ST6100, RHD4CZ5C051ST1502, RHD4CZ5C051ST1503 | 100% |  |
| RHD4CZ5C051ST2400 |  | Primary Test for UPVC Pipe Line 300 mm - (RD-C-5 /1)-Z5-C051-ST | 2d | 2027-01-28 | 2027-01-30 | RHD4CZ5C051ST2300 |  | -172d |
|  | 3947 | **RHD4-02-002-C051-(ST)-Concrete Encasement** |  | 2027-01-28 | 2027-01-30 |  |  |  |
| RHD4CZ5C051ST6100 |  | Pipe Encasement for Storm Pipelines - (RD-C-5 /1)-Z5-C051-ST | 2d | 2027-01-28 | 2027-01-30 | RHD4CZ5C051ST2300 SS, RHD4CZ5C051ST2300 FF, RHD4CZ5C051ST2200 |  | -172d |
|  | 3948 | **RHD4-02-002-Z5-C051-Catch Basin - ST** |  | 2026-08-04 | 2027-02-16 |  |  |  |
|  | 3949 | **RHD4-02-002-C051-(ST)-Single Catch Basin Works** |  | 2026-08-04 | 2027-02-16 |  |  |  |
| RHD4CZ5C051ST7100 |  | Excavation works for Single Catch Basin - (RD-C-5 /1)-Z5-C051-ST | 3d | 2026-08-04 A | 2026-08-06 A | RHD4ENSDZ5APPST110, RHD4CZ5C051ST2100 | 100% |  |
| RHD4CZ5C051ST7200 |  | PC Blinding, Installation and Pipe connection for Single Catch Basin - (RD-C-5 /1)-Z5-C051-ST | 3d | 2026-08-06 A | 2026-08-09 A | RHD4CZ5C051ST7100 | 100% |  |
| RHD4CZ5C051ST7300 |  | Rings & C.Slab & Final Backfill for Single Catch Basin - (RD-C-5 /1)-Z5-C051-ST | 4d | 2026-09-19 A | 2026-09-22 A | RHD4CZ5C051ST7200, RHD4PRSHLDOSST1304, RHD4PRSHLSTAGST1304 | 100% |  |
| RHD4CZ5C051ST7400 |  | Steel Cover for Single Catch Basin - (RD-C-5 /1)-Z5-C051-ST | 3d | 2027-01-26 | 2027-01-28 | RHD4CZ5C051ST7300, RHD4PRSHLDOSST1704 |  | -165d |
| RHD4CZ5C051ST7500 |  | Finishing and Insulation works for Single Catch Basin - (RD-C-5 /1)-Z5-C051-ST | 6d | 2027-02-10 | 2027-02-16 | RHD4CZ5C051ST7400, RHD4CZ5C051ST3500 |  | -175d |
|  | 6409 | **RHD4-02-002-C051-(ST)-Double Catch Basin Works** |  | 2026-08-04 | 2027-01-30 |  |  |  |
| RHD4CZ5C051ST8100 |  | Excavation works for Double Catch Basin - (RD-C-5 /1)-Z5-C051-ST | 2d | 2026-08-04 A | 2026-08-06 A | RHD4CZ5C051ST2100 | 100% |  |
| RHD4CZ5C051ST8200 |  | PC Blinding, Installation and Pipe connection for Double Catch Basin - (RD-C-5 /1)-Z5-C051-ST | 2d | 2026-08-06 A | 2026-08-09 A | RHD4CZ5C051ST8100 | 100% |  |
| RHD4CZ5C051ST8300 |  | Rings & C.Slab & Final Backfillfor Double Catch Basin - (RD-C-5 /1)-Z5-C051-ST | 2d | 2026-09-19 A | 2026-09-20 A | RHD4CZ5C051ST8200 | 100% |  |
| RHD4CZ5C051ST8400 |  | Steel Cover for Double Catch Basin - (RD-C-5 /1)-Z5-C051-ST | 2d | 2027-01-26 | 2027-01-27 | RHD4CZ5C051ST8300 |  | -180d |
| RHD4CZ5C051ST8500 |  | Finishing and Insulation works for Double Catch Basin - (RD-C-5 /1)-Z5-C051-ST | 2d | 2027-01-28 | 2027-01-30 | RHD4CZ5C051ST8400 |  | -180d |
|  | 3973 | **RHD4-02-002-Z5-C051-Sewage Network - SW** |  | 2026-08-08 | 2027-03-03 |  |  |  |
|  | 957 | **RHD4-02-002-C051-(SW)-MH Works - 1200 mm diameter with Back drop** |  | 2026-08-09 | 2027-02-16 |  |  |  |
| RHD4CZ5C051SW3101 |  | Excavation and PC Blinding works for MH 1200 mm - (RD-C-5 /1)-Z5-C051-SW | 2d | 2026-08-09 A | 2026-08-10 A | RHD4CZ5C051ST2100, RHD4CZ5C051ST3500 | 100% |  |
| RHD4CZ5C051SW3201 |  | Installation of Base for MH 1200 mm - (RD-C-5 /1)-Z5-C051-SW | 2d | 2026-08-12 A | 2026-08-13 A | RHD4CZ5C051SW3101 | 100% |  |
| RHD4CZ5C051SW3301 |  | MH Ring and C.Slab works and Backfilling works for MH 1200 mm - (RD-C-5 /1)-Z5-C051-SW | 2d | 2027-02-10 | 2027-02-11 | RHD4CZ5C051SW3201 |  | -156d |
| RHD4CZ5C051SW3401 |  | Steel Cover for MH 1200 mm - (RD-C-5 /1)-Z5-C051-SW | 2d | 2027-02-13 | 2027-02-14 | RHD4CZ5C051SW3301 |  | -156d |
| RHD4CZ5C051SW3501 |  | Finishing, Benching, Testing works for MH 1200 mm - (RD-C-5 /1)-Z5-C051-SW | 2d | 2027-02-15 | 2027-02-16 | RHD4CZ5C051SW3401 |  | -156d |
|  | 3794 | **RHD4-02-002-C051-(SW)-MH Works - 1200 mm diameter** |  | 2026-08-09 | 2027-03-03 |  |  |  |
| RHD4CZ5C051SW3100 |  | Excavation and PC Blinding works for MH 1200 mm - (RD-C-5 /1)-Z5-C051-SW | 5d | 2026-08-09 A | 2026-08-10 A | RHD4CZ5C051SW2100 | 100% |  |
| RHD4CZ5C051SW3200 |  | Installation of Base for MH 1200 mm - (RD-C-5 /1)-Z5-C051-SW | 7d | 2026-08-11 A | 2026-08-12 A | RHD4CZ5C051SW3100 | 100% |  |
| RHD4CZ5C051SW3300 |  | MH Ring and C.Slab works and Backfilling works for MH 1200 mm - (RD-C-5 /1)-Z5-C051-SW | 7d | 2027-02-10 | 2027-02-17 | RHD4CZ5C051SW3200 |  | -154d |
| RHD4CZ5C051SW3400 |  | Steel Cover for MH 1200 mm - (RD-C-5 /1)-Z5-C051-SW | 4d | 2027-02-18 | 2027-02-23 | RHD4CZ5C051SW3300 |  | -154d |
| RHD4CZ5C051SW3500 |  | Finishing, Benching, Testing works for MH 1200 mm - (RD-C-5 /1)-Z5-C051-SW | 7d | 2027-02-24 | 2027-03-03 | RHD4CZ5C051SW3400 |  | -154d |
|  | 3979 | **RHD4-02-002-C051-(SW)-UPVC Pipes - 200 mm diameter** |  | 2026-08-08 | 2026-09-20 |  |  |  |
| RHD4CZ5C051SW2100 |  | Excavation works for UPVC Pipe Line 200 mm - (RD-C-5 /1)-Z5-C051-SW | 4d | 2026-08-08 A | 2026-08-11 A | RHD4ENSDZ5APPSW120, RHD4CZ5C051SW3101 | 100% |  |
| RHD4CZ5C051SW2200 |  | Bedding works for UPVC Pipe Line 200 mm - (RD-C-5 /1)-Z5-C051-SW | 4d | 2026-08-12 A | 2026-08-14 A | RHD4CZ5C051SW2100 | 100% |  |
| RHD4CZ5C051SW2300 |  | Installing for UPVC Pipe Line 200 mm - (RD-C-5 /1)-Z5-C051-SW | 4d | 2026-08-15 A | 2026-08-18 A | RHD4CZ5C051SW2200, RHD4PRSHLSTAGSW1004, RHD4CZ5C051ST1501, RHD4PRSHLPOSW1000, RHD4PRSHLDOSSW1004, RHD4PRSHLDOSSW1304, RHD4PRSHLPOSW1100, RHD4PRSHLDOSSW1104 | 100% |  |
| RHD4CZ5C051SW2500 |  | Backfilling and warning tape works for UPVC Pipe Line 200 mm - (RD-C-5 /1)-Z5-C051-SW | 4d | 2026-08-17 A | 2026-08-22 A | RHD4CZ5C051SW2400 | 100% |  |
| RHD4CZ5C051SW2400 |  | Primary Test for UPVC Pipe Line 200 mm - (RD-C-5 /1)-Z5-C051-SW | 3d | 2026-09-13 A | 2026-09-20 A | RHD4CZ5C051SW2300 | 100% |  |

| ID | WBS | Task | Duration | Start | Finish | Predecessors | Complete | Total float |
| --- | --- | --- | --- | --- | --- | --- | --- | --- |
|  | 4010 | **RHD4-02-002-Z5-C051-Potable Network - PT** |  | 2026-08-04 | 2027-03-17 |  |  |  |
|  | 4011 | **RHD4-02-002-C051-(PT)-HDPE Pipes - 110 mm diameter** |  | 2026-08-04 | 2027-03-08 |  |  |  |
| RHD4CZ5C051PT1100 |  | Excavation works for HDPE Pipline 110 mm - (RD-C-5 /1)-Z5-C051-PT | 2d | 2026-08-04 A | 2026-08-05 A | RHD4CZ5C051SW2500, RHD4ENSDZ5APPPT130, RHD4ENMSPT2000, RHD4CZ5C051SW3300, RHD4CZ5C051SW3500 | 100% |  |
| RHD4CZ5C051PT1200 |  | Bedding works for HDPE Pipline 110 mm - (RD-C-5 /1)-Z5-C051-PT | 2d | 2026-08-06 A | 2026-08-08 A | RHD4CZ5C051PT1100 | 100% |  |
| RHD4CZ5C051PT1300 |  | Installing for HDPE Pipline 110 mm - (RD-C-5 /1)-Z5-C051-PT | 2d | 2026-08-08 A | 2026-08-09 A | RHD4CZ5C051PT1200, RHD4PRSHLDOSPT1000, RHD4PRSHLSTAGPT1000 | 100% |  |
| RHD4CZ5C051PT1400 |  | Primary Test for HDPE Pipline 110 mm - (RD-C-5 /1)-Z5-C051-PT | 2d | 2027-03-04 | 2027-03-06 | RHD4CZ5C051PT1300 |  | -154d |
| RHD4CZ5C051PT1500 |  | Backfilling and warning tape works for HDPE Pipline 110 mm - (RD-C-5 /1)-Z5-C051-PT | 2d | 2027-03-07 | 2027-03-08 | RHD4CZ5C051PT1400 |  | -154d |
|  | 4012 | **RHD4-02-002-C051-(PT)-HDPE Pipes - 160 mm diameter** |  | 2026-08-04 | 2027-03-15 |  |  |  |
| RHD4CZ5C051PT1101 |  | Excavation works for HDPE Pipline 160 mm - (RD-C-5 /1)-Z5-C051-PT | 2d | 2026-08-04 A | 2027-02-11 | RHD4CZ5C051SW2500, RHD4ENSDZ5APPPT130, RHD4ENMSPT2000 | 20% | -134d |
| RHD4CZ5C051PT1201 |  | Bedding works for HDPE Pipline 160 mm - (RD-C-5 /1)-Z5-C051-PT | 2d | 2026-08-06 A | 2027-02-14 | RHD4CZ5C051PT1101 | 20% | -116d |
| RHD4CZ5C051PT1301 |  | Installing for HDPE Pipline 160 mm - (RD-C-5 /1)-Z5-C051-PT | 3d | 2026-08-08 A | 2027-02-17 | RHD4CZ5C051PT1201, RHD4PRSHLDOSPT1000, RHD4PRSHLSTAGPT1000 | 20% | -116d |
| RHD4CZ5C051PT1401 |  | Primary Test for HDPE Pipline 160 mm - (RD-C-5 /1)-Z5-C051-PT | 2d | 2027-03-07 | 2027-03-08 | RHD4CZ5C051PT1301, RHD4CZ5C051PT3100 |  | -129d |
| RHD4CZ5C051PT1501 |  | Backfilling and warning tape works for HDPE Pipline 160 mm - (RD-C-5 /1)-Z5-C051-PT | 3d | 2027-03-13 | 2027-03-15 | RHD4CZ5C051PT1401 |  | -129d |
|  | 4016 | **RHD4-02-002-C051-(PT)-Gate Valves (Direct Buried)** |  | 2027-03-04 | 2027-03-17 |  |  |  |
| RHD4CZ5C051PT3100 |  | Installation for Direct Buried Gate Valves - (RD-C-5 /1)-Z5-C051-PT | 2d | 2027-03-04 | 2027-03-06 | RHD4CZ5C051PT1301 FF, RHD4CZ5C051PT1300 FF, RHD4CZ5C051PT1301 SS, RHD4CZ5C051PT1300 SS, RHD4PRSHLDOSPT1200, RHD4PRSHLSTAGPT1200 |  | -129d |
| RHD4CZ5C051PT3200 |  | Stem and Service box for Direct Buried Gate Valves - (RD-C-5 /1)-Z5-C051-PT | 2d | 2027-03-16 | 2027-03-17 | RHD4CZ5C051PT3100, RHD4CZ5C051PT1501, RHD4CZ5C051PT1500, RHD4PRSHLDOSPT1300, RHD4PRSHLSTAGPT1300, RHD4PRSHLSTAGSW1304 |  | -129d |
|  | 4021 | **RHD4-02-002-C051-(PT)-Air Valve Chambers** |  |  |  |  |  |  |
|  | 4022 | **RHD4-02-002-C051-(PT)-Air Valves** |  |  |  |  |  |  |
|  | 4023 | **RHD4-02-002-C051-(PT)-Fire Hydrant** |  |  |  |  |  |  |
|  | 4024 | **RHD4-02-002-C051-(PT)-Concrete Encasement** |  |  |  |  |  |  |
|  | 4025 | **RHD4-02-002-Z5-C051-Irrigation Network - IRR** |  | 2027-03-13 | 2027-04-08 |  |  |  |
|  | 4026 | **RHD4-02-002-C051-(IRR)-HDPE Pipes - 160 mm diameter** |  | 2027-03-13 | 2027-04-01 |  |  |  |
| RHD4CZ5C051IRR1100 |  | Excavation works for HDPE Pipline 160 mm - (RD-C-5 /1)-Z5-C051-IRR | 4d | 2027-03-13 | 2027-03-16 | RHD4CZ5C051PT1101, RHD4CZ5C051PT1100, RHD4ENSDZ5APPIRR140, RHD4ENMSRR2000, RHD4CZ5C051PT1500, RHD4CZ5C051RD3100, RHD4CZ5C051ST7500 |  | -154d |
| RHD4CZ5C051IRR1200 |  | Bedding works for HDPE Pipline 160 mm - (RD-C-5 /1)-Z5-C051-IRR | 4d | 2027-03-17 | 2027-03-21 | RHD4CZ5C051IRR1100 |  | -154d |
| RHD4CZ5C051IRR1300 |  | Installing for HDPE Pipline 160 mm - (RD-C-5 /1)-Z5-C051-IRR | 4d | 2027-03-22 | 2027-03-25 | RHD4CZ5C051IRR1200, RHD4PRSHLDOSIRR1000, RHD4PRSHLSTAGIRR1000 |  | -154d |
| RHD4CZ5C051IRR1400 |  | Primary Test for HDPE Pipline 160 mm - (RD-C-5 /1)-Z5-C051-IRR | 2d | 2027-03-27 | 2027-03-28 | RHD4CZ5C051IRR1300, RHD4CZ5C051IRR5100, RHD4CZ5C051IRR3100 |  | -154d |
| RHD4CZ5C051IRR1500 |  | Backfilling and warning tape works for HDPE Pipline 160 mm - (RD-C-5 /1)-Z5-C051-IRR | 4d | 2027-03-29 | 2027-04-01 | RHD4CZ5C051IRR1400 |  | -154d |
|  | 4034 | **RHD4-02-002-C051-(IRR)-Gate Valves (Direct Buried)** |  | 2027-03-24 | 2027-04-04 |  |  |  |
| RHD4CZ5C051IRR3100 |  | Installation for Direct Buried Gate Valves - (RD-C-5 /1)-Z5-C051-IRR | 2d | 2027-03-24 | 2027-03-25 | RHD4CZ5C051IRR1300 SS, RHD4CZ5C051IRR1300 FF, RHD4PRSHLDOSIRR1100, RHD4PRSHLSTAGIRR1100 |  | -154d |
| RHD4CZ5C051IRR3200 |  | Stem and Service box for Direct Buried Gate Valves - (RD-C-5 /1)-Z5-C051-IRR | 2d | 2027-04-03 | 2027-04-04 | RHD4CZ5C051IRR3100, RHD4CZ5C051IRR1500, RHD4PRSHLDOSIRR1300, RHD4PRSHLSTAGIRR1300 |  | -154d |
|  | 4037 | **RHD4-02-002-C051-(IRR)-Wash out Chamber** |  | 2027-03-27 | 2027-04-04 |  |  |  |
| RHD4CZ5C051IRR2101 |  | Excavation and Bedding for Wash out Chamber for Irrigation Network - (RD-C-5 /1)-Z5-C051-IRR | 2d | 2027-03-27 | 2027-03-28 | RHD4ENSDZ5APPIRR140, RHD4CZ5C051IRR3100 |  | -130d |
| RHD4CZ5C051IRR2201 |  | PC works for Wash out Chamber for Irrigation Network - (RD-C-5 /1)-Z5-C051-IRR | 2d | 2027-03-29 | 2027-03-30 | RHD4CZ5C051IRR2101 |  | -130d |
| RHD4CZ5C051IRR2301 |  | Installation for Wash out Chamber for Irrigation Network - (RD-C-5 /1)-Z5-C051-IRR | 2d | 2027-03-31 | 2027-04-01 | RHD4CZ5C051IRR2201, RHD4PRSHLDOSIRR1200, RHD4PRSHLDOSIRR1400, RHD4PRSHLSTAGIRR1200, RHD4PRSHLSTAGIRR1400 |  | -130d |
| RHD4CZ5C051IRR2401 |  | Backfilling works for Wash out Chamber for Irrigation Network - (RD-C-5 /1)-Z5-C051-IRR | 2d | 2027-04-03 | 2027-04-04 | RHD4CZ5C051IRR2301 |  | -130d |
|  | 4038 | **RHD4-02-002-C051-(IRR)-Wash out Valves** |  | 2027-04-03 | 2027-04-06 |  |  |  |
| RHD4CZ5C051IRR3102 |  | Installation for Wash out Valve for Irrigation Network - (RD-C-5 /1)-Z5-C051-IRR | 2d | 2027-04-03 | 2027-04-04 | RHD4CZ5C051IRR2301, RHD4PRSHLDOSIRR1100, RHD4PRSHLSTAGIRR1100 |  | -130d |
| RHD4CZ5C051IRR3202 |  | Stem and Service box for Wash out Valve for Irrigation Network - (RD-C-5 /1)-Z5-C051-IRR | 2d | 2027-04-05 | 2027-04-06 | RHD4CZ5C051IRR3102, RHD4CZ5C051IRR2401, RHD4PRSHLDOSIRR1300, RHD4PRSHLSTAGIRR1300 |  | -130d |
|  | 4039 | **RHD4-02-002-C051-(IRR)-Air Valve Chamber** |  | 2027-03-27 | 2027-04-04 |  |  |  |
| RHD4CZ5C051IRR2102 |  | Excavation and Bedding for Valve Chamber for Irrigation Network - (RD-C-5 /1)-Z5-C051-IRR | 2d | 2027-03-27 | 2027-03-28 | RHD4ENSDZ5APPIRR140, RHD4CZ5C051IRR3100 |  | -128d |
| RHD4CZ5C051IRR2202 |  | PC works for Valve Chamber for Irrigation Network - (RD-C-5 /1)-Z5-C051-IRR | 2d | 2027-03-29 | 2027-03-30 | RHD4CZ5C051IRR2102 |  | -128d |
| RHD4CZ5C051IRR2302 |  | Installation for Valve Chamber for Irrigation Network - (RD-C-5 /1)-Z5-C051-IRR | 2d | 2027-03-31 | 2027-04-01 | RHD4CZ5C051IRR2202, RHD4PRSHLDOSIRR1200, RHD4PRSHLDOSIRR1400, RHD4PRSHLSTAGIRR1200, RHD4PRSHLSTAGIRR1400 |  | -128d |
| RHD4CZ5C051IRR2402 |  | Backfilling works for Valve Chamber for Irrigation Network - (RD-C-5 /1)-Z5-C051-IRR | 2d | 2027-04-03 | 2027-04-04 | RHD4CZ5C051IRR2302 |  | -128d |
|  | 4040 | **RHD4-02-002-C051-(IRR)-Air Valves** |  | 2027-04-03 | 2027-04-08 |  |  |  |
| RHD4CZ5C051IRR3103 |  | Installation for Air Valves for Irrigation Network - (RD-C-5 /1)-Z5-C051-IRR | 2d | 2027-04-03 | 2027-04-04 | RHD4CZ5C051IRR2302, RHD4PRSHLDOSIRR1100, RHD4PRSHLSTAGIRR1100 |  | -128d |
| RHD4CZ5C051IRR3203 |  | Stem and Service box for Air Valves for Irrigation Network - (RD-C-5 /1)-Z5-C051-IRR | 2d | 2027-04-07 | 2027-04-08 | RHD4CZ5C051IRR3103, RHD4CZ5C051IRR2402, RHD4PRSHLDOSIRR1300, RHD4PRSHLSTAGIRR1300, RHD4CZ5C051IRR3202 |  | -130d |
|  | 4041 | **RHD4-02-002-C051-(IRR)-Concrete Encasement** |  | 2027-03-24 | 2027-03-25 |  |  |  |
| RHD4CZ5C051IRR5100 |  | Pipe Encasement for Irrigation Pipelines - (RD-C-5 /1)-Z5-C051-IRR | 2d | 2027-03-24 | 2027-03-25 | RHD4CZ5C051IRR1300 SS, RHD4CZ5C051IRR1300 FF, RHD4CZ5C051IRR1200 |  | -154d |
|  | 4059 | **RHD4-02-002-Z5-C051-Medium Voltage Network - MV** |  | 2026-08-04 | 2027-07-06 |  |  |  |
|  | 4060 | **RHD4-02-002-C051-(MV)-Medium Voltage cable trench** |  | 2027-06-22 | 2027-07-04 |  |  |  |
| RHD4CZ5C051MV1100 |  | Excavation for Medium Voltage Trench - (RD-C-5 /1)-Z5-C051-MV | 2d | 2027-06-22 | 2027-06-23 | RHD4ENSDZ5APPMV150, RHD4CZ5C051RD3100, RHD4CZ6C052MV3401 |  | -172d |
| RHD4CZ5C051MV1200 |  | Trench Backfilling for Medium Voltage Network - (RD-C-5 /1)-Z5-C051-MV | 2d | 2027-07-03 | 2027-07-04 | RHD4CZ5C051MV3200 |  | -172d |
|  | 4061 | **RHD4-02-002-C051-(MV)-Medium Voltage duct banks** |  | 2026-08-04 | 2026-08-12 |  |  |  |
| RHD4CZ5C051MV2100 |  | Excavation of Duct Banks for Medium Voltage Network - (RD-C-5 /1)-Z5-C051-MV | 2d | 2026-08-04 A | 2026-08-05 A | RHD4ENSDZ5APPMV150, RHD4CZ5C051MV1200 | 100% |  |
| RHD4CZ5C051MV2200 |  | Installation of Duct Banks for Medium Voltage Network - (RD-C-5 /1)-Z5-C051-MV | 2d | 2026-08-06 A | 2026-08-08 A | RHD4CZ5C051MV2100, RHD4PRSHLDOSMV1000, RHD4PRSHLSTAGMV1000 | 100% |  |
| RHD4CZ5C051MV2300 |  | Pouring of Duct Banks for Medium Voltage Network - (RD-C-5 /1)-Z5-C051-MV | 2d | 2026-08-09 A | 2026-08-10 A | RHD4CZ5C051MV2200 | 100% |  |
| RHD4CZ5C051MV2400 |  | Backfilling of Duct Banks for Medium Voltage Network - (RD-C-5 /1)-Z5-C051-MV | 2d | 2026-08-11 A | 2026-08-12 A | RHD4CZ5C051MV2300 | 100% |  |
|  | 4062 | **RHD4-02-002-C051-(MV)-Medium Voltage cables 3Cx 500 mm²** |  | 2027-06-24 | 2027-07-06 |  |  |  |
| RHD4CZ5C051MV3100 |  | Installation of Medium Voltage Cables 3Cx 500 mm² - (RD-C-5 /1)-Z5-C051-MV | 5d | 2027-06-24 | 2027-06-29 | RHD4CZ5C051MV1100, RHD4PRSHLDOSMV1100, RHD4ENMSMV2000, RHD4ENMSMV2010, RHD4PRSHLSTAGMV1100 |  | -172d |
| RHD4CZ5C051MV3200 |  | Joints Installation of Medium Voltage Cables 3Cx 500 mm² - (RD-C-5 /1)-Z5-C051-MV | 2d | 2027-06-30 | 2027-07-01 | RHD4CZ5C051MV3100, RHD4PRSHLDOSMV1300, RHD4PRSHLSTAGMV1300 |  | -172d |
| RHD4CZ5C051MV3300 |  | Testing of Medium Voltage Cables 3Cx 500 mm² - (RD-C-5 /1)-Z5-C051-MV | 2d | 2027-07-05 | 2027-07-06 | RHD4CZ5C051MV3200, RHD4CZ5C051MV1200 |  | -172d |
|  | 4066 | **RHD4-02-002-Z5-C051-Low Voltage Network - LV** |  | 2026-08-04 | 2027-06-08 |  |  |  |
|  | 4067 | **RHD4-02-002-C051-(LV)-Low Voltage duct banks** |  | 2026-08-04 | 2026-08-13 |  |  |  |
| RHD4CZ5C051LV2100 |  | Excavation of Duct Banks for Low Voltage Network - (RD-C-5 /1)-Z5-C051-LV | 3d | 2026-08-04 A | 2026-08-06 A | RHD4CZ5C051RW3000, RHD4ENSDZ5APPLV160, RHD4CZ5C051IRR3203 | 100% |  |
| RHD4CZ5C051LV2200 |  | Installation of Duct Banks for Low Voltage Network - (RD-C-5 /1)-Z5-C051-LV | 5d | 2026-08-06 A | 2026-08-11 A | RHD4CZ5C051LV2100, RHD4PRSHLDOSLV1000, RHD4PRSHLSTAGLV1000 | 100% |  |
| RHD4CZ5C051LV2300 |  | Pouring of Duct Banks for Low Voltage Network - (RD-C-5 /1)-Z5-C051-LV | 3d | 2026-08-09 A | 2026-08-11 A | RHD4CZ5C051LV2200 | 100% |  |
| RHD4CZ5C051LV2400 |  | Backfilling of Duct Banks for Low Voltage Network - (RD-C-5 /1)-Z5-C051-LV | 3d | 2026-08-11 A | 2026-08-13 A | RHD4CZ5C051LV2300 | 100% |  |
|  | 4068 | **RHD4-02-002-C051-(LV)-Low Voltage Drawpit** |  | 2027-05-04 | 2027-05-08 |  |  |  |
| RHD4CZ5C051LV5100 |  | Excavation of Drawpit size 900x900x1000mm for Low Voltage Network - (RD-C-5 /1)-Z5-C051-LV | 2d | 2027-05-04 | 2027-05-05 | RHD4ENSDZ5APPLV160, RHD4CZ6C052SL6100 |  | -155d |
| RHD4CZ5C051LV5200 |  | Installation of Drawpit size 900x900x1000mm for Low Voltage Network - (RD-C-5 /1)-Z5-C051-LV | 2d | 2027-05-06 | 2027-05-08 | RHD4CZ5C051LV5100, RHD4PRSHLDOSLV1400, RHD4PRSHLSTAGLV1400 |  | -155d |

| ID | WBS | Task | Duration | Start | Finish | Predecessors | Complete | Total float |
| --- | --- | --- | --- | --- | --- | --- | --- | --- |
|  | 4069 | **RHD4-02-002-C051-(LV)-Low Voltage cables** |  | 2027-05-09 | 2027-06-08 |  |  |  |
| RHD4CZ5C051LV3100 |  | Excavation for Low Voltage Cables for Low Voltage Network - (RD-C-5 /1)-Z5-C051-LV | 7d | 2027-05-09 | 2027-05-20 | RHD4ENSDZ5APPLV160, RHD4CZ5C051LV5200, RHD4CZ5C051LV2400 |  | -155d |
| RHD4CZ5C051LV3200 |  | Cable Laying of Low Voltage Cables for Low Voltage Network - (RD-C-5 /1)-Z5-C051-LV | 6d | 2027-05-22 | 2027-05-27 | RHD4CZ5C051LV3100, RHD4PRSHLDOSLV1100, RHD4ENMSLV2000, RHD4ENMSLV2010, RHD4PRSHLSTAGLV1100 |  | -155d |
| RHD4CZ5C051LV3300 |  | Warning tape and Backfill for Low Voltage Cables for Low Voltage Network - (RD-C-5 /1)-Z5-C051-LV | 6d | 2027-05-29 | 2027-06-03 | RHD4CZ5C051LV3200 |  | -155d |
| RHD4CZ5C051LV3400 |  | Testing of Low Voltage Cables for Low Voltage Network - (RD-C-5 /1)-Z5-C051-LV | 4d | 2027-06-05 | 2027-06-08 | RHD4CZ5C051LV3300 |  | -155d |
|  | 4072 | **RHD4-02-002-Z5-C051-Street Lighting Network - SL** |  | 2027-06-09 | 2027-07-08 |  |  |  |
|  | 4075 | **RHD4-02-002-C051-(SL)-Street Lighting cables** |  | 2027-06-09 | 2027-06-22 |  |  |  |
| RHD4CZ5C051SL3100 |  | Excavation for Street Lighting Cables for Street Lighting Network - (RD-C-5 /1)-Z5-C051-SL | 4d | 2027-06-09 | 2027-06-13 | RHD4ENSDZ5APPSL170, RHD4CZ5C051LV3400 |  | -155d |
| RHD4CZ5C051SL3200 |  | Cable Laying of Street Lighting Cables for Street Lighting Network - (RD-C-5 /1)-Z5-C051-SL | 3d | 2027-06-14 | 2027-06-16 | RHD4CZ5C051SL3100, RHD4PRSHLDOSSL1100, RHD4ENMSSL2000, RHD4ENMSSL2010, RHD4PRSHLSTAGSL1100 |  | -155d |
| RHD4CZ5C051SL3300 |  | Warning tape and Backfill for Street Lighting Cables for Street Lighting Network - (RD-C-5 /1)-Z5-C051-SL | 3d | 2027-06-17 | 2027-06-20 | RHD4CZ5C051SL3200 |  | -155d |
| RHD4CZ5C051SL3400 |  | Testing of Street Lighting Cables for Street Lighting Network - (RD-C-5 /1)-Z5-C051-SL | 2d | 2027-06-21 | 2027-06-22 | RHD4CZ5C051SL3300 |  | -155d |
|  | 4076 | **RHD4-02-002-C051-(SL)-Street Lighting Poles** |  | 2027-06-23 | 2027-07-08 |  |  |  |
| RHD4CZ5C051SL1100 |  | Excavation for RC Base for Lighting Poles for Street Lighting Network - (RD-C-5 /1)-Z5-C051-SL | 2d | 2027-06-23 | 2027-06-24 | RHD4ENSDZ5APPSL170, RHD4CZ5C051IRR3203, RHD4CZ5C051SL3400 |  | -155d |
| RHD4CZ5C051SL1200 |  | Installation for RC Base for Lighting Poles for Street Lighting Network - (RD-C-5 /1)-Z5-C051-SL | 2d | 2027-06-26 | 2027-06-27 | RHD4CZ5C051SL1100 |  | -155d |
| RHD4CZ5C051SL1300 |  | Backfill for RC Base for Lighting Poles for Street Lighting Network - (RD-C-5 /1)-Z5-C051-SL | 2d | 2027-06-28 | 2027-06-29 | RHD4CZ5C051SL1200 |  | -155d |
| RHD4CZ5C051SL1400 |  | Installation for Lighting Poles for Street Lighting Network - (RD-C-5 /1)-Z5-C051-SL | 3d | 2027-06-30 | 2027-07-03 | RHD4CZ5C051SL1300, RHD4PRSHLDOSSL1200, RHD4ENMSSL2000, RHD4ENMSSL2010, RHD4PRSHLSTAGSL1200 |  | -155d |
| RHD4CZ5C051SL1500 |  | Luminaire Installation for Lighting Poles for Street Lighting Network - (RD-C-5 /1)-Z5-C051-SL | 3d | 2027-07-06 | 2027-07-08 | RHD4CZ5C051SL1400, RHD4CZ5C051SL6100, RHD4PRSHLDOSSL1300, RHD4PRSHLSTAGSL1300 |  | -155d |
|  | 4078 | **RHD4-02-002-C051-(SL)-Street Lighting Earthing System** |  | 2027-07-04 | 2027-07-05 |  |  |  |
| RHD4CZ5C051SL6100 |  | Installation of Earthing for Lighting Poles and Fedder Pillers for Street Lighting Network - (RD-C-5 /1)-Z5-C051-SL | 2d | 2027-07-04 | 2027-07-05 | RHD4CZ5C051SL1400, RHD4ENMSER2000, RHD4ENMSER2010 |  | -155d |
|  | 5023 | **RHD4-02-002-C051-(SL)-Street Lighting Feeder Pillars** |  |  |  |  |  |  |
|  | 4084 | **RHD4-02-002-Z5-C051-Telecommunications Network - TC** |  | 2026-07-28 | 2027-08-18 |  |  |  |
|  | 4085 | **RHD4-02-002-C051-(TC)-Telecommunications Ducts** |  | 2027-07-10 | 2027-08-09 |  |  |  |
| RHD4CZ5C051TC2100 |  | Excavation of HDPE Ducts for Telecom Network - (RD-C-5 /1)-Z5-C051-TC | 8d | 2027-07-10 | 2027-07-18 | RHD4ENSDZ5APPTC190, RHD4CZ5C051SL1500, RHD4CZ5C051MV2400, RHD4CZ5C051MV3300 |  | -155d |
| RHD4CZ5C051TC2200 |  | Installation of HDPE Ducts for Telecom Network - (RD-C-5 /1)-Z5-C051-TC | 11d | 2027-07-19 | 2027-07-31 | RHD4CZ5C051TC2100, RHD4PRSHLDOSTC1000, RHD4PRSHLSTAGTC1000 |  | -155d |
| RHD4CZ5C051TC2400 |  | Backfilling of HDPE Ducts for Telecom Network - (RD-C-5 /1)-Z5-C051-TC | 8d | 2027-08-01 | 2027-08-09 | RHD4CZ5C051TC2200 |  | -155d |
|  | 4086 | **RHD4-02-002-C051-(TC)-Telecommunications Manholes** |  | 2027-08-10 | 2027-08-18 |  |  |  |
| RHD4CZ5C051TC5100 |  | Excavation for Manholes for Telecom Network - (RD-C-5 /1)-Z5-C051-TC | 4d | 2027-08-10 | 2027-08-14 | RHD4ENSDZ5APPTC190, RHD4CZ5C051TC2400 |  | -155d |
| RHD4CZ5C051TC5200 |  | Installation of Manholes for Telecom Network - (RD-C-5 /1)-Z5-C051-TC | 4d | 2027-08-15 | 2027-08-18 | RHD4CZ5C051TC5100, RHD4CZ5C051TC2200 SS, RHD4PRSHLDOSTC1200, RHD4PRSHLSTAGTC1200 |  | -155d |
|  | 4087 | **RHD4-02-002-C051-(TC)-Telecomminications Road Crossings** |  | 2026-07-28 | 2026-08-12 |  |  |  |
| RHD4CZ5C051TC3100 |  | Excavation for Road Crossings for Telecom Network - (RD-C-5 /1)-Z5-C051-TC | 2d | 2026-07-28 A | 2026-08-05 A | RHD4ENSDZ5APPTC190, RHD4CZ5C051ST3101 | 100% |  |
| RHD4CZ5C051TC3200 |  | Installation of Road Crossings for Telecom Network - (RD-C-5 /1)-Z5-C051-TC | 2d | 2026-07-30 A | 2026-08-08 A | RHD4CZ5C051TC3100, RHD4PRSHLDOSTC1100, RHD4PRSHLSTAGTC1100 | 100% |  |
| RHD4CZ5C051TC3300 |  | Pouring of Road Crossings for Telecom Network - (RD-C-5 /1)-Z5-C051-TC | 2d | 2026-08-02 A | 2026-08-10 A | RHD4CZ5C051TC3200 | 100% |  |
| RHD4CZ5C051TC3400 |  | Backfilling of Road Crossings for Telecom Network - (RD-C-5 /1)-Z5-C051-TC | 2d | 2026-08-04 A | 2026-08-12 A | RHD4CZ5C051TC3300 | 100% |  |
|  | 4088 | **RHD4-02-002-Z5-C051-Information and Communication Technologies - ICT** |  | 2026-07-30 | 2027-09-15 |  |  |  |
|  | 4089 | **RHD4-02-002-C051-(ICT)-Information and Communication Technologies Ducts** |  | 2027-08-19 | 2027-09-15 |  |  |  |
| RHD4CZ5C051ICT2100 |  | Excavation of HDPE Ducts for ICT Network - (RD-C-5 /1)-Z5-C051-ICT | 7d | 2027-08-19 | 2027-08-26 | RHD4CZ5C051ICT3400, RHD4ENSDZ5APPICT200, RHD4CZ5C051TC5200 |  | -155d |
| RHD4CZ5C051ICT2200 |  | Installation of HDPE Ducts for ICT Network - (RD-C-5 /1)-Z5-C051-ICT | 10d | 2027-08-28 | 2027-09-07 | RHD4CZ5C051ICT2100, RHD4PRSHLDOSICT1000, RHD4PRSHLSTAGICT1000 |  | -155d |
| RHD4CZ5C051ICT2400 |  | Backfilling of HDPE Ducts for ICT Network - (RD-C-5 /1)-Z5-C051-ICT | 7d | 2027-09-08 | 2027-09-15 | RHD4CZ5C051ICT2200 |  | -155d |
|  | 4090 | **RHD4-02-002-C051-(ICT)-Information and Communication Technologies Manholes** |  | 2027-08-28 | 2027-09-02 |  |  |  |
| RHD4CZ5C051ICT5100 |  | Excavation for Manholes for ICT Network - (RD-C-5 /1)-Z5-C051-ICT | 3d | 2027-08-28 | 2027-08-30 | RHD4CZ5C051ICT2100, RHD4ENSDZ5APPICT200 |  | -144d |
| RHD4CZ5C051ICT5200 |  | Installation of Manholes for ICT Network - (RD-C-5 /1)-Z5-C051-ICT | 3d | 2027-08-31 | 2027-09-02 | RHD4CZ5C051ICT5100, RHD4PRSHLDOSICT1200, RHD4PRSHLSTAGICT1200 |  | -144d |
|  | 4091 | **RHD4-02-002-C051-(ICT)-Information and Communication Technologies Road Crossings** |  | 2026-07-30 | 2026-08-12 |  |  |  |
| RHD4CZ5C051ICT3100 |  | Excavation for Road Crossings for ICT Network - (RD-C-5 /1)-Z5-C051-ICT | 2d | 2026-07-30 A | 2026-08-05 A | RHD4ENSDZ5APPICT200, RHD4CZ5C051TC3100 | 100% |  |
| RHD4CZ5C051ICT3200 |  | Installation of Road Crossings for ICT Network - (RD-C-5 /1)-Z5-C051-ICT | 2d | 2026-08-06 A | 2026-08-08 A | RHD4CZ5C051ICT3100, RHD4PRSHLDOSICT1100, RHD4PRSHLSTAGICT1100 | 100% |  |
| RHD4CZ5C051ICT3300 |  | Pouring of Road Crossings for ICT Network - (RD-C-5 /1)-Z5-C051-ICT | 2d | 2026-08-09 A | 2026-08-10 A | RHD4CZ5C051ICT3200 | 100% |  |
| RHD4CZ5C051ICT3400 |  | Backfilling of Road Crossings for ICT Network - (RD-C-5 /1)-Z5-C051-ICT | 2d | 2026-08-11 A | 2026-08-12 A | RHD4CZ5C051ICT3300 | 100% |  |
|  | 4079 | **RHD4-02-002-Z5-C051-Landscape Network - LS** |  |  |  |  |  |  |
|  | 4080 | **RHD4-02-002-C051-(LS)-Landscape Lighting cables** |  |  |  |  |  |  |
|  | 4081 | **RHD4-02-002-C051-(LS)-Landscape Feeder Pillars** |  |  |  |  |  |  |
|  | 4082 | **RHD4-02-002-C051-(LS)-Landscape Bollard Poles** |  |  |  |  |  |  |
|  | 4083 | **RHD4-02-002-C051-(LS)-Landscape Feeder Pillars Earthing** |  |  |  |  |  |  |
|  | 4092 | **RHD4-02-002-Z5-C051-Security Network - CCTV** |  | 2027-09-16 | 2027-10-30 |  |  |  |
|  | 4093 | **RHD4-02-002-C051-(CCTV)-Civil Works** |  | 2027-09-16 | 2027-09-28 |  |  |  |
| RHD4CZ5C051CCTV2100 |  | Civil Works for Security Network - (RD-C-5 /1)-Z5-C051-CCTV | 10d | 2027-09-16 | 2027-09-28 | RHD4CZ5C051ICT2400, RHD4CZ5C051ICT5200 |  | -155d |
|  | 4851 | **RHD4-02-002-A015-(CCTV)-CCTV Poles** |  | 2027-09-29 | 2027-10-10 |  |  |  |
| RHD4CZ5C051CCTV1100 |  | Excavation for RC Base for CCTV Poles for Security Network - (RD-C-5 /1)-Z5-C051-CCTV | 2d | 2027-09-29 | 2027-09-30 | RHD4CZ5C051CCTV2100 |  | -155d |
| RHD4CZ5C051CCTV1200 |  | Installation for RC Base for CCTV Poles for Security Network - (RD-C-5 /1)-Z5-C051-CCTV | 2d | 2027-10-02 | 2027-10-03 | RHD4CZ5C051CCTV1100 |  | -155d |
| RHD4CZ5C051CCTV1300 |  | Backfill for RC Base for CCTV Poles for Security Network - (RD-C-5 /1)-Z5-C051-CCTV | 2d | 2027-10-04 | 2027-10-05 | RHD4CZ5C051CCTV1200 |  | -155d |
| RHD4CZ5C051CCTV1400 |  | Installation for CCTV Poles for Security Network - (RD-C-5 /1)-Z5-C051-CCTV | 2d | 2027-10-06 | 2027-10-07 | RHD4CZ5C051CCTV1300 |  | -155d |
| RHD4CZ5C051CCTV1500 |  | Protection post Installation for CCTV Poles for Security Network - (RD-C-5 /1)-Z5-C051-CCTV | 2d | 2027-10-09 | 2027-10-10 | RHD4CZ5C051CCTV1400 |  | -153d |
|  | 4852 | **RHD4-02-002-A015-(CCTV)-Camera** |  | 2027-10-11 | 2027-10-12 |  |  |  |
| RHD4CZ5C051CCTV3100 |  | Installation for Cameras for Security Network - (RD-C-5 /1)-Z5-C051-CCTV | 2d | 2027-10-11 | 2027-10-12 | RHD4CZ5C051CCTV1400, RHD4CZ5C051CCTV4100 |  | -155d |
|  | 4853 | **RHD4-02-002-A015-(CCTV)-Power and Infrastructure** |  | 2027-10-09 | 2027-10-12 |  |  |  |
| RHD4CZ5C051CCTV4100 |  | Installation of Power outlet, UPS and midspan for PTZ Camerafor Cameras for Security Network - (RD-C-5 /1)-Z5-C051-CCTV | 2d | 2027-10-09 | 2027-10-10 | RHD4CZ5C051CCTV1400 |  | -155d |
| RHD4CZ5C051CCTV4200 |  | Short Range Wireless PoP wireless Bridgefor CCTV Poles for Security Network - (RD-L-16)-Z5-L016-CCTV | 2d | 2027-10-11 | 2027-10-12 | RHD4CZ5C051CCTV4100 |  | -155d |
|  | 4855 | **RHD4-02-002-A015-(CCTV)-CCTV Panels and Components** |  | 2027-10-13 | 2027-10-30 |  |  |  |
| RHD4CZ5C051CCTV6100 |  | Installation for CCTV Panels for Security Network - (RD-C-5 /1)-Z5-C051-CCTV | 15d | 2027-10-13 | 2027-10-30 | RHD4CZ5C051CCTV4200, RHD4CZ5C051CCTV3100, RHD4CZ5C051CCTV1500 |  | -155d |
|  | 4109 | **RHD4-02-002-Z5-RA07** |  | 2026-05-20 | 2027-12-09 |  |  |  |
|  | 4140 | **RHD4-02-002-Z5-RA07-Crossings Sewage Network - SWCr** |  |  |  |  |  |  |
|  | 4150 | **RHD4-02-002-RA07-(SWCr)-MH Works - 1200 mm diameter** |  |  |  |  |  |  |

| ID | WBS | Task | Duration | Start | Finish | Predecessors | Complete | Total float |
| --- | --- | --- | --- | --- | --- | --- | --- | --- |
|  | 4146 | **RHD4-02-002-RA07-(SWCr)-UPVC Pipes - 200 mm diameter** |  |  |  |  |  |  |
|  | 4184 | **RHD4-02-002-Z5-RA07-Crossings Potable Network - PTCr** |  |  |  |  |  |  |
|  | 4197 | **RHD4-02-002-RA07-(PTCr)-Fire Hydrant** |  |  |  |  |  |  |
|  | 4231 | **RHD4-02-002-Z5-RA07-Crossings Irrigation Network - IRRC** |  |  |  |  |  |  |
|  | 4234 | **RHD4-02-002-RA07-(IRRC)-HDPE Pipes - 200 mm diameter** |  |  |  |  |  |  |
|  | 4240 | **RHD4-02-002-RA07-(IRRC)-Gate Valves (Direct Buried)** |  |  |  |  |  |  |
|  | 4288 | **RHD4-02-002-Z5-RA07-Road Works - RD** |  | 2026-05-20 | 2027-12-09 |  |  |  |
|  | 4289 | **RHD4-02-002-RA07-(RD)-Subgrade** |  | 2026-05-20 | 2026-06-03 |  |  |  |
| RHD4CZ5RA07RD1100 |  | Supply, lay and compaction subgrade compacted thickness 300 mm for Roads - (ROUND-07)-Z5-RA07-RD | 3d | 2026-05-20 A | 2026-06-03 A | RHD4ENSDZ5APPRD220, RHD4ENSDZ5APPEW100, RHD4CZ5RA07SW3200 SS | 100% |  |
|  | 4290 | **RHD4-02-002-RA07-(RD)-Aggregate Base Course** |  | 2027-02-08 | 2027-02-14 |  |  |  |
| RHD4CZ5RA07RD2100 |  | Supply, lay and compaction Aggregate base course compacted thickness 300 mmfor Roads - (ROUND-07)-Z5-RA07-RD | 6d | 2027-02-08 | 2027-02-14 | RHD4PRSHLDOSRD1000, RHD4PRSHLSTAGRD1000, RHD4CZ5RA07RD1100 |  | -159d |
|  | 4291 | **RHD4-02-002-RA07-(RD)-Bituminous base course Two Layers, including (MC1)&(RC2)** |  | 2027-02-15 | 2027-10-07 |  |  |  |
| RHD4CZ5RA07RD3100 |  | Supply, lay and Asphaltic base course including Prime Coat (MC1) for 1st Layer - (ROUND-07)-Z5-RA07-RD | 3d | 2027-02-15 | 2027-02-17 | RHD4CZ5RA07RD2100, RHD4PRSHLDOSRD1100, RHD4ENMSASPH2000, RHD4ENMSASPH2010, RHD4PRSHLSTAGRD1100 |  | -159d |
| RHD4CZ5RA07RD3200 |  | Supply, lay and Asphaltic base course including Tack Coat (RC2) for 2nd Layer - (ROUND-07)-Z5-RA07-RD | 3d | 2027-10-05 | 2027-10-07 | RHD4PRSHLDOSRD1100, RHD4PRSHLSTAGRD1100, RHD4CZ5RA07CCTV6100, RHD4CZ5RA07CCTV1500 |  | -171d |
|  | 4293 | **RHD4-02-002-RA07-(RD)-Precast Concrete Curb** |  | 2027-10-09 | 2027-10-13 |  |  |  |
| RHD4CZ5RA07RD5100 |  | Supply and installation Precast Concrete Kerb for Roads - (ROUND-07)-Z5-RA07-RD | 5d | 2027-10-09 | 2027-10-13 | RHD4CZ5RA07RD3200, RHD4PRSHLDOSRD1200, RHD4ENMSRD2000, RHD4ENMSRD2010, RHD4PRSHLSTAGRD1200 |  | -171d |
|  | 4296 | **RHD4-02-002-RA07-(RD)-Traffic Signage** |  | 2027-10-14 | 2027-10-20 |  |  |  |
| RHD4CZ5RA07RD8100 |  | Installation of Traffic Signage for Road Network - (ROUND-07)-Z5-RA07-RD | 6d | 2027-10-14 | 2027-10-20 | RHD4CZ5RA07RD5100, RHD4PRSHLDOSRD1600, RHD4PRSHLSTAGRD1600 |  | -171d |
|  | 4294 | **RHD4-02-002-RA07-(RD)-Precast Interlocking Block Pavers** |  |  |  |  |  |  |
|  | 4292 | **RHD4-02-002-RA07-(RD)-Bituminous concrete wearing course including tack coat (RC2)** |  | 2027-10-14 | 2027-10-16 |  |  |  |
| RHD4CZ5RA07RD4100 |  | Supply, lay and compaction Asphaltic wearing course including tack Coat (RC2)for Road Network - (ROUND-07)-Z5-RA07-RD | 2d | 2027-10-14 | 2027-10-16 | RHD4CZ5RA07RD5100 |  | -167d |
|  | 4295 | **RHD4-02-002-RA07-(RD)-Pavement Marking** |  | 2027-10-21 | 2027-12-09 |  |  |  |
| RHD4CZ5RA07RD7100 |  | Pavement Markings for Road Network - (ROUND-07)-Z5-RA07-RD | 4d | 2027-10-21 | 2027-10-25 | RHD4CZ5RA07RD4100, RHD4PRSHLDOSRD1500, RHD4PRSHLSTAGRD1500, RHD4CZ5RA07RD8100 |  | -171d |
| RHD4CZ5RA07RD9200 |  | Installation for Wheel Stopper for Road Network - (ROUND-07)-Z5-RA07-RD | 10d | 2027-11-29 | 2027-12-09 | RHD4CZ5C051RD7100 |  | -155d |
|  | 4113 | **RHD4-02-002-Z5-RA07-Storm Network - ST** |  |  |  |  |  |  |
|  | 4130 | **RHD4-02-002-RA07-(ST)-MH Works - 1200 mm diameter** |  |  |  |  |  |  |
|  | 4132 | **RHD4-02-002-RA07-(ST)-MH Works - 2000 mm diameter** |  |  |  |  |  |  |
|  | 4131 | **RHD4-02-002-RA07-(ST)-MH Works - 1500 mm diameter** |  |  |  |  |  |  |
|  | 4120 | **RHD4-02-002-RA07-(ST)-GRP Pipes - 1000 mm diameter** |  |  |  |  |  |  |
|  | 4119 | **RHD4-02-002-RA07-(ST)-GRP Pipes - 900 mm diameter** |  |  |  |  |  |  |
|  | 4118 | **RHD4-02-002-RA07-(ST)-GRP Pipes - 800 mm diameter** |  |  |  |  |  |  |
|  | 4117 | **RHD4-02-002-RA07-(ST)-GRP Pipes - 700 mm diameter** |  |  |  |  |  |  |
|  | 4114 | **RHD4-02-002-RA07-(ST)-GRP Pipes - 400 mm diameter** |  |  |  |  |  |  |
|  | 4129 | **RHD4-02-002-RA07-(ST)-UPVC Pipes - 400 mm diameter** |  |  |  |  |  |  |
|  | 4128 | **RHD4-02-002-RA07-(ST)-UPVC Pipes - 300 mm diameter** |  |  |  |  |  |  |
|  | 4136 | **RHD4-02-002-RA07-(ST)-Concrete Encasement** |  |  |  |  |  |  |
|  | 4137 | **RHD4-02-002-Z5-RA07-Catch Basin - ST** |  |  |  |  |  |  |
|  | 4138 | **RHD4-02-002-RA07-(ST)-Single Catch Basin Works** |  |  |  |  |  |  |
|  | 4139 | **RHD4-02-002-RA07-(ST)-Double Catch Basin Works** |  |  |  |  |  |  |
|  | 4162 | **RHD4-02-002-Z5-RA07-Sewage Network - SW** |  | 2026-08-04 | 2027-02-24 |  |  |  |
|  | 4172 | **RHD4-02-002-RA07-(SW)-MH Works - 1200 mm diameter** |  | 2026-08-09 | 2027-02-24 |  |  |  |
| RHD4CZ5RA07SW3100 |  | Excavation and PC Blinding works for MH 1200 mm - (ROUND-07)-Z5-RA07-SW | 3d | 2026-08-09 A | 2027-02-07 | RHD4ENSDZ5APPSW120, RHD4CZ5C061ST1500 SS, RHD4CZ5C051ST3101 | 80% | -162d |
| RHD4CZ5RA07SW3200 |  | Installation of Base for MH 1200 mm - (ROUND-07)-Z5-RA07-SW | 3d | 2026-08-10 A | 2027-02-09 | RHD4CZ5RA07SW3100 | 40% | -162d |
| RHD4CZ5RA07SW3300 |  | MH Ring and C.Slab works and Backfilling works for MH 1200 mm - (ROUND-07)-Z5-RA07-SW | 5d | 2027-02-10 | 2027-02-15 | RHD4CZ5RA07SW3200 |  | -162d |
| RHD4CZ5RA07SW3400 |  | Steel Cover for MH 1200 mm - (ROUND-07)-Z5-RA07-SW | 2d | 2027-02-16 | 2027-02-17 | RHD4CZ5RA07SW3300 |  | -162d |
| RHD4CZ5RA07SW3500 |  | Finishing, Benching, Testing works for MH 1200 mm - (ROUND-07)-Z5-RA07-SW | 5d | 2027-02-18 | 2027-02-24 | RHD4CZ5RA07SW3400 |  | -162d |
|  | 4168 | **RHD4-02-002-RA07-(SW)-UPVC Pipes - 200 mm diameter** |  | 2026-08-04 | 2027-02-20 |  |  |  |
| RHD4CZ5RA07SW2100 |  | Excavation works for UPVC Pipe Line 200 mm - (ROUND-07)-Z5-RA07-SW | 2d | 2026-08-04 A | 2026-09-17 A | RHD4ENSDZ5APPSW120, RHD4CZ5RA07SW3200 | 100% |  |
| RHD4CZ5RA07SW2200 |  | Bedding works for UPVC Pipe Line 200 mm - (ROUND-07)-Z5-RA07-SW | 2d | 2026-08-06 A | 2026-09-20 A | RHD4CZ5RA07SW2100 | 100% |  |
| RHD4CZ5RA07SW2300 |  | Installing for UPVC Pipe Line 200 mm - (ROUND-07)-Z5-RA07-SW | 2d | 2026-08-10 A | 2026-09-22 A | RHD4CZ5RA07SW2200, RHD4CZ5RA07SW3300, RHD4PRSHLSTAGSW1004, RHD4PRSHLPOSW1000, RHD4PRSHLDOSSW1004, RHD4PRSHLDOSSW1304, RHD4PRSHLPOSW1100, RHD4PRSHLDOSSW1104 | 100% |  |
| RHD4CZ5RA07SW2500 |  | Backfilling and warning tape works for UPVC Pipe Line 200 mm - (ROUND-07)-Z5-RA07-SW | 2d | 2026-08-13 A | 2027-02-20 | RHD4CZ5RA07SW2400, RHD4CZ5RA07RD3100 | 42% | -159d |
| RHD4CZ5RA07SW2400 |  | Primary Test for UPVC Pipe Line 200 mm - (ROUND-07)-Z5-RA07-SW | 2d | 2027-02-16 | 2027-02-17 | RHD4CZ5RA07SW2300 |  | -159d |
|  | 4199 | **RHD4-02-002-Z5-RA07-Potable Network - PT** |  | 2026-08-04 | 2027-04-29 |  |  |  |
|  | 4201 | **RHD4-02-002-RA07-(PT)-HDPE Pipes - 160 mm diameter** |  | 2026-08-04 | 2027-04-15 |  |  |  |
| RHD4CZ5RA07PT1101 |  | Excavation works for HDPE Pipline 160 mm - (ROUND-07)-Z5-RA07-PT | 2d | 2026-08-04 A | 2027-04-06 | RHD4ENSDZ5APPPT130, RHD4ENMSPT2000, RHD4CZ5RA07SW3100, RHD4CZ5C051IRR3200 | 92% | -154d |
| RHD4CZ5RA07PT1201 |  | Bedding works for HDPE Pipline 160 mm - (ROUND-07)-Z5-RA07-PT | 2d | 2026-08-06 A | 2027-04-08 | RHD4CZ5RA07PT1101 | 92% | -154d |
| RHD4CZ5RA07PT1301 |  | Installing for HDPE Pipline 160 mm - (ROUND-07)-Z5-RA07-PT | 2d | 2026-08-08 A | 2027-04-11 | RHD4CZ5RA07PT1201, RHD4PRSHLDOSPT1000, RHD4PRSHLSTAGPT1000 | 92% | -154d |
| RHD4CZ5RA07PT1401 |  | Primary Test for HDPE Pipline 160 mm - (ROUND-07)-Z5-RA07-PT | 2d | 2027-04-12 | 2027-04-13 | RHD4CZ5RA07PT1301 |  | -154d |
| RHD4CZ5RA07PT1501 |  | Backfilling and warning tape works for HDPE Pipline 160 mm - (ROUND-07)-Z5-RA07-PT | 2d | 2027-04-14 | 2027-04-15 | RHD4CZ5RA07PT1401 |  | -154d |
|  | 1751 | **RHD4-02-002-RA07-(PT)-Air Valve Chambers** |  | 2027-04-19 | 2027-04-27 |  |  |  |
| RHD4CZ5RA07PT2102 |  | Excavation and Bedding for Air Valve Chambers for Potable Water Network - (ROUND-07)-Z5-RA07-PT | 2d | 2027-04-19 | 2027-04-20 | RHD4CZ5RA07PT2101 |  | -154d |
| RHD4CZ5RA07PT2202 |  | PC works for Air Valve Chambers for Potable Water Network - (ROUND-07)-Z5-RA07-PT | 2d | 2027-04-21 | 2027-04-22 | RHD4CZ5RA07PT2102 |  | -154d |
| RHD4CZ5RA07PT2302 |  | Installation for Air Valve Chambers for Potable Water Network - (ROUND-07)-Z5-RA07-PT | 2d | 2027-04-24 | 2027-04-25 | RHD4CZ5RA07PT2202 |  | -154d |
| RHD4CZ5RA07PT2402 |  | Backfilling works for Air Valve Chambers for Potable Water Network - (ROUND-07)-Z5-RA07-PT | 2d | 2027-04-26 | 2027-04-27 | RHD4CZ5RA07PT2302 |  | -154d |
|  | 2888 | **RHD4-02-002-RA071-(PT)-Fire Hydrant** |  | 2027-04-19 | 2027-04-29 |  |  |  |
| RHD4CZ5RA07PT4100 |  | Excavation and Bedding and Pipe Installation for Fire Hydrant - (ROUND-07)-Z5-RA07-PT | 2d | 2027-04-19 | 2027-04-20 | RHD4CZ5RA07PT2101 |  | -154d |
| RHD4CZ5RA07PT4200 |  | Valve Installation for Fire Hydrant - (ROUND-07)-Z5-RA07-PT | 2d | 2027-04-21 | 2027-04-22 | RHD4CZ5RA07PT4100 |  | -154d |
| RHD4CZ5RA07PT4300 |  | Stem for Fire Hydrant - (ROUND-07)-Z5-RA07-PT | 2d | 2027-04-24 | 2027-04-25 | RHD4CZ5RA07PT4200 |  | -154d |
| RHD4CZ5RA07PT4400 |  | Fire Installation for Fire Hydrant - (ROUND-07)-Z5-RA07-PT | 2d | 2027-04-26 | 2027-04-27 | RHD4CZ5RA07PT4300 |  | -154d |
| RHD4CZ5RA07PT4500 |  | Protection Barriers for Fire Hydrant - (ROUND-07)-Z5-RA07-PT | 2d | 2027-04-28 | 2027-04-29 | RHD4CZ5RA07PT4400 |  | -154d |

| ID | WBS | Task | Duration | Start | Finish | Predecessors | Complete | Total float |
| --- | --- | --- | --- | --- | --- | --- | --- | --- |
|  | 4208 | **RHD4-02-002-RA07-(PT)-Wash out Valve Chambers** |  | 2027-04-17 | 2027-04-27 |  |  |  |
| RHD4CZ5RA07PT2101 |  | Excavation and Bedding for Wash out Valve Chambers for Potable Water Network - (ROUND-07)-Z5-RA07-PT | 2d | 2027-04-17 | 2027-04-18 | RHD4CZ5RA07PT1501, RHD4ENSDZ5APPPT130 |  | -154d |
| RHD4CZ5RA07PT2201 |  | PC works for Wash out Valve Chambers for Potable Water Network - (ROUND-07)-Z5-RA07-PT | 2d | 2027-04-19 | 2027-04-20 | RHD4CZ5RA07PT2101 |  | -152d |
| RHD4CZ5RA07PT2301 |  | Installation for Wash out Valve Chambers for Potable Water Network - (ROUND-07)-Z5-RA07-PT | 2d | 2027-04-21 | 2027-04-22 | RHD4CZ5RA07PT2201, RHD4PRSHLDOSPT1100, RHD4PRSHLDOSPT1400, RHD4PRSHLSTAGPT1100, RHD4PRSHLSTAGPT1400 |  | -152d |
| RHD4CZ5RA07PT2401 |  | Backfilling works for Wash out Valve Chambers for Potable Water Network - (ROUND-07)-Z5-RA07-PT | 2d | 2027-04-26 | 2027-04-27 | RHD4CZ5RA07PT2301, RHD4CZ5RA07PT4300 |  | -154d |
|  | 4209 | **RHD4-02-002-RA07-(PT)-Wash out Valves** |  | 2027-04-24 | 2027-04-29 |  |  |  |
| RHD4CZ5RA07PT3102 |  | Installation for Wash out Valves for Potable Water Network - (ROUND-07)-Z5-RA07-PT | 2d | 2027-04-24 | 2027-04-25 | RHD4CZ5RA07PT2301, RHD4PRSHLDOSPT1200, RHD4PRSHLSTAGPT1200 |  | -152d |
| RHD4CZ5RA07PT3202 |  | Stem and Service box for Wash out Valves for Potable Water Network - (ROUND-07)-Z5-RA07-PT | 2d | 2027-04-28 | 2027-04-29 | RHD4CZ5RA07PT3102, RHD4CZ5RA07PT2401 |  | -154d |
|  | 1752 | **RHD4-02-002-RA07-(PT)-Air Valves** |  | 2027-04-26 | 2027-04-29 |  |  |  |
| RHD4CZ5RA07PT3103 |  | Installation for Air Valves for Potable Water Network - (ROUND-07)-Z5-RA07-PT | 2d | 2027-04-26 | 2027-04-27 | RHD4CZ5RA07PT2302 |  | -154d |
| RHD4CZ5RA07PT3203 |  | Stem and Service box for Air Valves for Potable Water Network - (ROUND-07)-Z5-RA07-PT | 2d | 2027-04-28 | 2027-04-29 | RHD4CZ5RA07PT3103, RHD4CZ5RA07PT2402 |  | -154d |
|  | 4205 | **RHD4-02-002-RA07-(PT)-Gate Valves (Direct Buried)** |  | 2027-04-10 | 2027-04-18 |  |  |  |
| RHD4CZ5RA07PT3100 |  | Installation for Direct Buried Gate Valves - (ROUND-07)-Z5-RA07-PT | 2d | 2027-04-10 | 2027-04-11 | RHD4CZ5RA07PT1301 FF, RHD4CZ5RA07PT1301 SS, RHD4PRSHLDOSPT1200, RHD4PRSHLSTAGPT1200 |  | -138d |
| RHD4CZ5RA07PT3200 |  | Stem and Service box for Direct Buried Gate Valves - (ROUND-07)-Z5-RA07-PT | 2d | 2027-04-17 | 2027-04-18 | RHD4CZ5RA07PT3100, RHD4CZ5RA07PT1501, RHD4PRSHLDOSPT1300 |  | -142d |
|  | 4214 | **RHD4-02-002-Z5-RA07-Irrigation Network - IRR** |  | 2026-08-04 | 2027-04-29 |  |  |  |
|  | 4217 | **RHD4-02-002-RA07-(IRR)-HDPE Pipes - 200 mm diameter** |  | 2026-08-04 | 2027-04-18 |  |  |  |
| RHD4CZ5RA07IRR1102 |  | Excavation works for HDPE Pipline 200 mm - (ROUND-07)-Z5-RA07-IRR | 2d | 2026-08-04 A | 2027-04-08 | RHD4CZ5RA07PT1101, RHD4ENSDZ5APPIRR140, RHD4ENMSRR2000, RHD4CZ5C061IRR1102 | 28% | -154d |
| RHD4CZ5RA07IRR1202 |  | Bedding works for HDPE Pipline 200 mm - (ROUND-07)-Z5-RA07-IRR | 2d | 2026-08-06 A | 2027-04-11 | RHD4CZ5RA07IRR1102 | 37% | -154d |
| RHD4CZ5RA07IRR1302 |  | Installing for HDPE Pipline 200 mm - (ROUND-07)-Z5-RA07-IRR | 2d | 2026-08-08 A | 2027-04-13 | RHD4CZ5RA07IRR1202, RHD4PRSHLDOSIRR1000, RHD4PRSHLSTAGIRR1000 | 24% | -154d |
| RHD4CZ5RA07IRR1402 |  | Primary Test for HDPE Pipline 200 mm - (ROUND-07)-Z5-RA07-IRR | 2d | 2027-04-14 | 2027-04-15 | RHD4CZ5RA07IRR1302, RHD4CZ5RA07IRR3100 |  | -154d |
| RHD4CZ5RA07IRR1502 |  | Backfilling and warning tape works for HDPE Pipline 200 mm - (ROUND-07)-Z5-RA07-IRR | 2d | 2027-04-17 | 2027-04-18 | RHD4CZ5RA07IRR1402 |  | -154d |
|  | 4223 | **RHD4-02-002-RA07-(IRR)-Gate Valves (Direct Buried)** |  | 2027-04-12 | 2027-04-15 |  |  |  |
| RHD4CZ5RA07IRR3100 |  | Installation for Direct Buried Gate Valves - (ROUND-07)-Z5-RA07-IRR | 2d | 2027-04-12 | 2027-04-13 | RHD4CZ5RA07IRR1302 SS, RHD4CZ5RA07IRR1302 FF, RHD4PRSHLDOSIRR1100, RHD4PRSHLSTAGIRR1100 |  | -154d |
| RHD4CZ5RA07IRR3200 |  | Stem and Service box for Direct Buried Gate Valves - (ROUND-07)-Z5-RA07-IRR | 2d | 2027-04-14 | 2027-04-15 | RHD4CZ5RA07IRR3100 |  | -152d |
|  | 4226 | **RHD4-02-002-RA07-(IRR)-Wash out Chamber** |  | 2027-04-19 | 2027-04-27 |  |  |  |
| RHD4CZ5RA07IRR2101 |  | Excavation and Bedding for Wash out Chamber for Irrigation Network - (ROUND-07)-Z5-RA07-IRR | 2d | 2027-04-19 | 2027-04-20 | RHD4CZ5RA07IRR1502, RHD4ENSDZ5APPIRR140, RHD4CZ5RA07IRR3200 |  | -154d |
| RHD4CZ5RA07IRR2201 |  | PC works for Wash out Chamber for Irrigation Network - (ROUND-07)-Z5-RA07-IRR | 2d | 2027-04-21 | 2027-04-22 | RHD4CZ5RA07IRR2101 |  | -154d |
| RHD4CZ5RA07IRR2301 |  | Installation for Wash out Chamber for Irrigation Network - (ROUND-07)-Z5-RA07-IRR | 2d | 2027-04-24 | 2027-04-25 | RHD4CZ5RA07IRR2201, RHD4PRSHLDOSIRR1200, RHD4PRSHLDOSIRR1400, RHD4PRSHLSTAGIRR1200, RHD4PRSHLSTAGIRR1400 |  | -154d |
| RHD4CZ5RA07IRR2401 |  | Backfilling works for Wash out Chamber for Irrigation Network - (ROUND-07)-Z5-RA07-IRR | 2d | 2027-04-26 | 2027-04-27 | RHD4CZ5RA07IRR2301 |  | -154d |
|  | 4227 | **RHD4-02-002-RA07-(IRR)-Wash out Valves** |  | 2027-04-26 | 2027-04-29 |  |  |  |
| RHD4CZ5RA07IRR3102 |  | Installation for Wash out Valve for Irrigation Network - (ROUND-07)-Z5-RA07-IRR | 2d | 2027-04-26 | 2027-04-27 | RHD4CZ5RA07IRR2301, RHD4PRSHLDOSIRR1100, RHD4PRSHLSTAGIRR1100 |  | -154d |
| RHD4CZ5RA07IRR3202 |  | Stem and Service box for Wash out Valve for Irrigation Network - (ROUND-07)-Z5-RA07-IRR | 2d | 2027-04-28 | 2027-04-29 | RHD4CZ5RA07IRR3102, RHD4CZ5RA07IRR2401, RHD4PRSHLDOSIRR1300, RHD4PRSHLSTAGIRR1300 |  | -154d |
|  | 6107 | **RHD4-02-002-RA07-(IRR)-HDPE Pipes - 160 mm diameter** |  | 2026-08-04 | 2027-04-22 |  |  |  |
| RHD4CZ5RA07IRR1100 |  | Excavation works for HDPE Pipline 160 mm - (ROUND-07)-Z5-RA07-IRR | 2d | 2026-08-04 A | 2027-04-11 | RHD4CZ5RA07IRR1102 | 55% | -143d |
| RHD4CZ5RA07IRR1200 |  | Bedding works for HDPE Pipline 160 mm - (ROUND-07)-Z5-RA07-IRR | 2d | 2026-08-06 A | 2027-04-13 | RHD4CZ5RA07IRR1100 | 48% | -143d |
| RHD4CZ5RA07IRR1300 |  | Installing for HDPE Pipline 160 mm - (ROUND-07)-Z5-RA07-IRR | 2d | 2026-08-08 A | 2027-04-15 | RHD4CZ5RA07IRR1200 | 45% | -143d |
| RHD4CZ5RA07IRR1400 |  | Primary Test for HDPE Pipline 160 mm - (ROUND-07)-Z5-RA07-IRR | 2d | 2027-04-19 | 2027-04-20 | RHD4CZ5RA07IRR5100, RHD4CZ5RA07IRR1300 |  | -143d |
| RHD4CZ5RA07IRR1500 |  | Backfilling and warning tape works for HDPE Pipline 160 mm - (ROUND-07)-Z5-RA07-IRR | 2d | 2027-04-21 | 2027-04-22 | RHD4CZ5RA07IRR1400 |  | -143d |
|  | 1771 | **RHD4-02-002-RA07-(IRR)-Concrete Encasement** |  | 2027-04-17 | 2027-04-18 |  |  |  |
| RHD4CZ5RA07IRR5100 |  | Pipe Encasement for Irrigation Pipelines - (ROUND-07)-Z5-RA07-IRR | 2d | 2027-04-17 | 2027-04-18 | RHD4CZ5RA07IRR1300 |  | -143d |
|  | 4248 | **RHD4-02-002-Z5-RA07-Medium Voltage Network - MV** |  | 2027-07-07 | 2027-07-31 |  |  |  |
|  | 4249 | **RHD4-02-002-RA07-(MV)-Medium Voltage cable trench** |  | 2027-07-07 | 2027-07-15 |  |  |  |
| RHD4CZ5RA07MV1100 |  | Excavation for Medium Voltage Trench - (ROUND-07)-Z5-RA07-MV | 3d | 2027-07-07 | 2027-07-10 | RHD4ENSDZ5APPMV150, RHD4CZ5RA07RD3100, RHD4CZ5C051MV3300 |  | -172d |
| RHD4CZ5RA07MV1200 |  | Trench Backfilling for Medium Voltage Network - (ROUND-07)-Z5-RA07-MV | 3d | 2027-07-13 | 2027-07-15 | RHD4CZ5RA07MV3101 |  | -172d |
|  | 4251 | **RHD4-02-002-RA07-(MV)-Medium Voltage cables 3Cx 500 mm²** |  | 2027-07-11 | 2027-07-21 |  |  |  |
| RHD4CZ5RA07MV3100 |  | Installation of Medium Voltage Cables 3Cx 500 mm² - (ROUND-07)-Z5-RA07-MV | 4d | 2027-07-11 | 2027-07-14 | RHD4CZ5RA07MV1100, RHD4PRSHLDOSMV1100, RHD4ENMSMV2000, RHD4ENMSMV2010, RHD4PRSHLSTAGMV1100 |  | -163d |
| RHD4CZ5RA07MV3200 |  | Joints Installation of Medium Voltage Cables 3Cx 500 mm² - (ROUND-07)-Z5-RA07-MV | 2d | 2027-07-15 | 2027-07-17 | RHD4CZ5RA07MV3100, RHD4PRSHLDOSMV1300, RHD4PRSHLSTAGMV1300 |  | -163d |
| RHD4CZ5RA07MV3300 |  | Testing of Medium Voltage Cables 3Cx 500 mm² - (ROUND-07)-Z5-RA07-MV | 2d | 2027-07-18 | 2027-07-19 | RHD4CZ5RA07MV3200, RHD4CZ5RA07MV1200 |  | -163d |
| RHD4CZ5RA07MV3400 |  | Termination of Medium Voltage Cables 3Cx 500 mm² - (ROUND-07)-Z5-RA07-MV | 2d | 2027-07-20 | 2027-07-21 | RHD4CZ5RA07MV3300 |  | -163d |
|  | 4252 | **RHD4-02-002-RA07-(MV)-Medium Voltage cables 3Cx 50 mm²** |  | 2027-07-11 | 2027-07-20 |  |  |  |
| RHD4CZ5RA07MV3101 |  | Installation of Medium Voltage Cables 3Cx 50 mm² - (ROUND-07)-Z5-RA07-MV | 2d | 2027-07-11 | 2027-07-12 | RHD4CZ5RA07MV1100, RHD4PRSHLDOSMV1200, RHD4ENMSMV2000, RHD4ENMSMV2010, RHD4PRSHLSTAGMV1200 |  | -172d |
| RHD4CZ5RA07MV3301 |  | Testing of Medium Voltage Cables 3Cx 50 mm² - (ROUND-07)-Z5-RA07-MV | 2d | 2027-07-17 | 2027-07-18 | RHD4CZ5RA07MV3101, RHD4CZ5RA07MV1200 |  | -162d |
| RHD4CZ5RA07MV3401 |  | Termination of Medium Voltage Cables 3Cx 50 mm² - (ROUND-07)-Z5-RA07-MV | 2d | 2027-07-19 | 2027-07-20 | RHD4CZ5RA07MV3301 |  | -162d |
|  | 4254 | **RHD4-02-002-RA07-(MV)-Unit Substations** |  | 2027-07-17 | 2027-07-31 |  |  |  |
| RHD4CZ5RA07MV5100 |  | Excavation for Unit Substations for Medium Voltage Network - (ROUND-07)-Z5-RA07-MV | 2d | 2027-07-17 | 2027-07-18 | RHD4CZ5RA07MV1200, RHD4ENSDZ5APPMV150 |  | -172d |
| RHD4CZ5RA07MV5200 |  | Concrete Base Placement for Unit Substations for Medium Voltage Network - (ROUND-07)-Z5-RA07-MV | 2d | 2027-07-19 | 2027-07-20 | RHD4CZ5RA07MV5100 |  | -172d |
| RHD4CZ5RA07MV5300 |  | Installation for Fences and doors for Medium Voltage Network - (ROUND-07)-Z5-RA07-MV | 5d | 2027-07-21 | 2027-07-26 | RHD4CZ5RA07MV5200 |  | -172d |
| RHD4CZ5RA07MV5400 |  | Installation for Unit Substations for Medium Voltage Network - (ROUND-07)-Z5-RA07-MV | 4d | 2027-07-27 | 2027-07-31 | RHD4CZ5RA07MV5300 |  | -172d |
|  | 4255 | **RHD4-02-002-Z5-RA07-Low Voltage Network - LV** |  | 2026-08-04 | 2027-05-13 |  |  |  |
|  | 4256 | **RHD4-02-002-RA07-(LV)-Low Voltage duct banks** |  | 2026-08-04 | 2026-08-12 |  |  |  |
| RHD4CZ5RA07LV2100 |  | Excavation of Duct Banks for Low Voltage Network - (ROUND-07)-Z5-RA07-LV | 2d | 2026-08-04 A | 2026-08-05 A | RHD4CZ5RA07RA3000, RHD4ENSDZ5APPLV160, RHD4CZ5RA07IRR1500 | 100% |  |
| RHD4CZ5RA07LV2200 |  | Installation of Duct Banks for Low Voltage Network - (ROUND-07)-Z5-RA07-LV | 3d | 2026-08-06 A | 2026-08-09 A | RHD4CZ5RA07LV2100 | 100% |  |
| RHD4CZ5RA07LV2300 |  | Pouring of Duct Banks for Low Voltage Network - (ROUND-07)-Z5-RA07-LV | 2d | 2026-08-09 A | 2026-08-10 A | RHD4CZ5RA07LV2200 | 100% |  |
| RHD4CZ5RA07LV2400 |  | Backfilling of Duct Banks for Low Voltage Network - (ROUND-07)-Z5-RA07-LV | 2d | 2026-08-11 A | 2026-08-12 A | RHD4CZ5RA07LV2300 | 100% |  |
|  | 4257 | **RHD4-02-002-RA07-(LV)-Low Voltage Drawpit** |  | 2027-04-24 | 2027-04-27 |  |  |  |
| RHD4CZ5RA07LV5100 |  | Excavation of Drawpit size 900x900x1000mm for Low Voltage Network - (ROUND-07)-Z5-RA07-LV | 2d | 2027-04-24 | 2027-04-25 | RHD4CZ5RA07LV2300, RHD4ENSDZ5APPLV160 |  | -143d |
| RHD4CZ5RA07LV5200 |  | Installation of Drawpit size 900x900x1000mm for Low Voltage Network - (ROUND-07)-Z5-RA07-LV | 2d | 2027-04-26 | 2027-04-27 | RHD4CZ5RA07LV5100, RHD4PRSHLDOSLV1400, RHD4PRSHLSTAGLV1400 |  | -143d |
|  | 4258 | **RHD4-02-002-RA07-(LV)-Low Voltage cables** |  | 2027-04-28 | 2027-05-06 |  |  |  |
| RHD4CZ5RA07LV3100 |  | Excavation for Low Voltage Cables for Low Voltage Network - (ROUND-07)-Z5-RA07-LV | 2d | 2027-04-28 | 2027-04-29 | RHD4CZ5RA07LV2400, RHD4CZ5RA07PT1501, RHD4ENSDZ5APPLV160, RHD4CZ5RA07LV5200 |  | -143d |
| RHD4CZ5RA07LV3200 |  | Cable Laying of Low Voltage Cables for Low Voltage Network - (ROUND-07)-Z5-RA07-LV | 2d | 2027-05-01 | 2027-05-02 | RHD4CZ5RA07LV3100, RHD4PRSHLDOSLV1100, RHD4ENMSLV2000, RHD4ENMSLV2010, RHD4PRSHLSTAGLV1100 |  | -143d |

| ID | WBS | Task | Duration | Start | Finish | Predecessors | Complete | Total float |
| --- | --- | --- | --- | --- | --- | --- | --- | --- |
| RHD4CZ5RA07LV3300 |  | Warning tape and Backfill for Low Voltage Cables for Low Voltage Network - (ROUND-07)-Z5-RA07-LV | 2d | 2027-05-03 | 2027-05-04 | RHD4CZ5RA07LV3200 |  | -143d |
| RHD4CZ5RA07LV3400 |  | Testing of Low Voltage Cables for Low Voltage Network - (ROUND-07)-Z5-RA07-LV | 2d | 2027-05-05 | 2027-05-06 | RHD4CZ5RA07LV3300 |  | -143d |
|  | 4259 | **RHD4-02-002-RA07-(LV)-Low Voltage Distribution Pillars** |  | 2027-05-08 | 2027-05-13 |  |  |  |
| RHD4CZ5RA07LV4100 |  | Leveling for Distribution Pillars for Low Voltage Network - (ROUND-07)-Z5-RA07-LV | 2d | 2027-05-08 | 2027-05-09 | RHD4CZ5RA07LV3300, RHD4CZ5RA07LV3400 |  | -143d |
| RHD4CZ5RA07LV4200 |  | Lean Concrete for Distribution Pillars for Low Voltage Network - (ROUND-07)-Z5-RA07-LV | 2d | 2027-05-10 | 2027-05-11 | RHD4CZ5RA07LV4100 |  | -143d |
| RHD4CZ5RA07LV4300 |  | Installation of Distribution Pillars for Low Voltage Network - (ROUND-07)-Z5-RA07-LV | 2d | 2027-05-12 | 2027-05-13 | RHD4CZ5RA07LV4200, RHD4PRSHLDOSLV1200, RHD4PRSHLDOSLV1300, RHD4PRSHLSTAGLV1200, RHD4PRSHLSTAGLV1300 |  | -143d |
|  | 4260 | **RHD4-02-002-RA07-(LV)-Low Voltage Distribution Pillars Earthing** |  |  |  |  |  |  |
|  | 4261 | **RHD4-02-002-Z5-RA07-Street Lighting Network - SL** |  | 2026-08-04 | 2027-06-16 |  |  |  |
|  | 4262 | **RHD4-02-002-RA07-(SL)-Street Lighting duct banks** |  | 2026-08-04 | 2027-05-11 |  |  |  |
| RHD4CZ5RA07SL2100 |  | Excavation of Duct Banks for Street Lighting Network - (ROUND-07)-Z5-RA07-SL | 4d | 2026-08-04 A | 2027-04-27 | RHD4CZ5RA07LV2100, RHD4CZ5RA07RA3000, RHD4ENSDZ5APPSL170 | 92% | -142d |
| RHD4CZ5RA07SL2200 |  | Installation of Duct Banks for Street Lighting Network - (ROUND-07)-Z5-RA07-SL | 5d | 2026-08-06 A | 2027-05-03 | RHD4CZ5RA07SL2100, RHD4CZ5RA07LV2200, RHD4PRSHLDOSSL1000, RHD4PRSHLSTAGSL1000 | 92% | -138d |
| RHD4CZ5RA07SL2300 |  | Pouring of Duct Banks for Street Lighting Network - (ROUND-07)-Z5-RA07-SL | 4d | 2026-08-09 A | 2027-05-08 | RHD4CZ5RA07SL2200, RHD4CZ5RA07LV2300 | 92% | -138d |
| RHD4CZ5RA07SL2400 |  | Backfilling of Duct Banks for Street Lighting Network - (ROUND-07)-Z5-RA07-SL | 3d | 2026-08-11 A | 2027-05-11 | RHD4CZ5RA07SL2300, RHD4CZ5RA07LV2400 | 92% | -128d |
|  | 4263 | **RHD4-02-002-RA07-(SL)-Street Lighting Drawpit** |  | 2027-05-19 | 2027-05-23 |  |  |  |
| RHD4CZ5RA07SL5100 |  | Excavation of Drawpit size 600x600x900mm for Street Lighting Network - (ROUND-07)-Z5-RA07-SL | 2d | 2027-05-19 | 2027-05-20 | RHD4CZ5RA07SL2300, RHD4ENSDZ5APPSL170, RHD4CZ5RA07LV4300 |  | -143d |
| RHD4CZ5RA07SL5200 |  | Installation of Drawpit size 600x600x900mm for Street Lighting Network - (ROUND-07)-Z5-RA07-SL | 2d | 2027-05-22 | 2027-05-23 | RHD4CZ5RA07SL5100, RHD4PRSHLDOSSL1400, RHD4PRSHLSTAGSL1400 |  | -143d |
|  | 4264 | **RHD4-02-002-RA07-(SL)-Street Lighting cables** |  | 2027-05-24 | 2027-06-02 |  |  |  |
| RHD4CZ5RA07SL3100 |  | Excavation for Street Lighting Cables for Street Lighting Network - (ROUND-07)-Z5-RA07-SL | 3d | 2027-05-24 | 2027-05-26 | RHD4ENSDZ5APPSL170, RHD4CZ5RA07SL5200 |  | -143d |
| RHD4CZ5RA07SL3200 |  | Cable Laying of Street Lighting Cables for Street Lighting Network - (ROUND-07)-Z5-RA07-SL | 2d | 2027-05-27 | 2027-05-29 | RHD4CZ5RA07SL3100, RHD4PRSHLDOSSL1100, RHD4ENMSSL2000, RHD4ENMSSL2010, RHD4PRSHLSTAGSL1100 |  | -143d |
| RHD4CZ5RA07SL3300 |  | Warning tape and Backfill for Street Lighting Cables for Street Lighting Network - (ROUND-07)-Z5-RA07-SL | 2d | 2027-05-30 | 2027-05-31 | RHD4CZ5RA07SL3200 |  | -143d |
| RHD4CZ5RA07SL3400 |  | Testing of Street Lighting Cables for Street Lighting Network - (ROUND-07)-Z5-RA07-SL | 2d | 2027-06-01 | 2027-06-02 | RHD4CZ5RA07SL3300 |  | -143d |
|  | 4265 | **RHD4-02-002-RA07-(SL)-Street Lighting Poles** |  | 2027-06-03 | 2027-06-14 |  |  |  |
| RHD4CZ5RA07SL1100 |  | Excavation for RC Base for Lighting Poles for Street Lighting Network - (ROUND-07)-Z5-RA07-SL | 2d | 2027-06-03 | 2027-06-05 | RHD4CZ5RA07SL2400, RHD4ENSDZ5APPSL170, RHD4CZ5RA07SL3400 |  | -143d |
| RHD4CZ5RA07SL1200 |  | Installation for RC Base for Lighting Poles for Street Lighting Network - (ROUND-07)-Z5-RA07-SL | 2d | 2027-06-06 | 2027-06-07 | RHD4CZ5RA07SL1100 |  | -143d |
| RHD4CZ5RA07SL1300 |  | Backfill for RC Base for Lighting Poles for Street Lighting Network - (ROUND-07)-Z5-RA07-SL | 2d | 2027-06-08 | 2027-06-09 | RHD4CZ5RA07SL1200 |  | -143d |
| RHD4CZ5RA07SL1400 |  | Installation for Lighting Poles for Street Lighting Network - (ROUND-07)-Z5-RA07-SL | 2d | 2027-06-10 | 2027-06-12 | RHD4CZ5RA07SL1300, RHD4PRSHLDOSSL1200, RHD4ENMSSL2000, RHD4ENMSSL2010, RHD4PRSHLSTAGSL1200 |  | -143d |
| RHD4CZ5RA07SL1500 |  | Luminaire Installation for Lighting Poles for Street Lighting Network - (ROUND-07)-Z5-RA07-SL | 2d | 2027-06-13 | 2027-06-14 | RHD4CZ5RA07SL1400, RHD4PRSHLDOSSL1300, RHD4PRSHLSTAGSL1300 |  | -143d |
|  | 4266 | **RHD4-02-002-RA07-(SL)-Street Lighting Feeder Pillars** |  | 2027-06-01 | 2027-06-14 |  |  |  |
| RHD4CZ5RA07SL4100 |  | Leveling for Distribution Pillars for Street Lighting Network - (ROUND-07)-Z5-RA07-SL | 2d | 2027-06-01 | 2027-06-02 | RHD4CZ5RA07SL3300 |  | -137d |
| RHD4CZ5RA07SL4200 |  | Lean Concrete for Distribution Pillars for Street Lighting Network - (ROUND-07)-Z5-RA07-SL | 2d | 2027-06-03 | 2027-06-05 | RHD4CZ5RA07SL4100 |  | -137d |
| RHD4CZ5RA07SL4300 |  | Installation of Distribution Pillars for Street Lighting Network - (ROUND-07)-Z5-RA07-SL | 2d | 2027-06-13 | 2027-06-14 | RHD4CZ5RA07SL4200, RHD4CZ5RA07SL1400 |  | -143d |
|  | 4267 | **RHD4-02-002-RA07-(SL)-Street Lighting Earthing System** |  | 2027-06-15 | 2027-06-16 |  |  |  |
| RHD4CZ5RA07SL6100 |  | Installation of Earthing for Lighting Poles and Fedder Pillers for Street Lighting Network - (ROUND-07)-Z5-RA07-SL | 2d | 2027-06-15 | 2027-06-16 | RHD4CZ5RA07SL4300, RHD4ENMSER2000, RHD4ENMSER2010, RHD4CZ5RA07SL1500 |  | -143d |
|  | 4273 | **RHD4-02-002-Z5-RA07-Telecommunications Network - TC** |  | 2027-06-17 | 2027-08-04 |  |  |  |
|  | 4274 | **RHD4-02-002-RA07-(TC)-Telecommunications Ducts** |  | 2027-06-17 | 2027-06-28 |  |  |  |
| RHD4CZ5RA07TC2100 |  | Excavation of HDPE Ducts for Telecom Network - (ROUND-07)-Z5-RA07-TC | 3d | 2027-06-17 | 2027-06-20 | RHD4ENSDZ5APPTC190, RHD4CZ5RA07SL6100 |  | -143d |
| RHD4CZ5RA07TC2200 |  | Installation of HDPE Ducts for Telecom Network - (ROUND-07)-Z5-RA07-TC | 4d | 2027-06-21 | 2027-06-24 | RHD4CZ5RA07TC2100, RHD4PRSHLDOSTC1000, RHD4PRSHLSTAGTC1000 |  | -143d |
| RHD4CZ5RA07TC2400 |  | Backfilling of HDPE Ducts for Telecom Network - (ROUND-07)-Z5-RA07-TC | 3d | 2027-06-26 | 2027-06-28 | RHD4CZ5RA07TC2200 |  | -143d |
|  | 4275 | **RHD4-02-002-RA07-(TC)-Telecommunications Manholes** |  | 2027-08-01 | 2027-08-04 |  |  |  |
| RHD4CZ5RA07TC5100 |  | Excavation for Manholes for Telecom Network - (ROUND-07)-Z5-RA07-TC | 2d | 2027-08-01 | 2027-08-02 | RHD4ENSDZ5APPTC190, RHD4CZ5RA07TC2400, RHD4CZ5RA07MV5400, RHD4CZ5RA07MV3400, RHD4CZ5RA07MV3401 |  | -171d |
| RHD4CZ5RA07TC5200 |  | Installation of Manholes for Telecom Network - (ROUND-07)-Z5-RA07-TC | 2d | 2027-08-03 | 2027-08-04 | RHD4CZ5RA07TC5100, RHD4PRSHLDOSTC1200, RHD4PRSHLSTAGTC1200 |  | -171d |
|  | 5411 | **RHD4-02-002-RA07-(TC)-Telecomminications Road Crossings** |  |  |  |  |  |  |
|  | 4277 | **RHD4-02-002-Z5-RA07-Information and Communication Technologies - ICT** |  | 2027-08-05 | 2027-08-21 |  |  |  |
|  | 4278 | **RHD4-02-002-RA07-(ICT)-Information and Communication Technologies Ducts** |  | 2027-08-05 | 2027-08-16 |  |  |  |
| RHD4CZ5RA07ICT2100 |  | Excavation of HDPE Ducts for ICT Network - (ROUND-07)-Z5-RA07-ICT | 3d | 2027-08-05 | 2027-08-08 | RHD4ENSDZ5APPICT200, RHD4CZ5RA07SL2100, RHD4CZ5RA07TC5200 |  | -171d |
| RHD4CZ5RA07ICT2200 |  | Installation of HDPE Ducts for ICT Network - (ROUND-07)-Z5-RA07-ICT | 4d | 2027-08-09 | 2027-08-12 | RHD4CZ5RA07ICT2100, RHD4PRSHLDOSICT1000, RHD4PRSHLSTAGICT1000 SS |  | -171d |
| RHD4CZ5RA07ICT2400 |  | Backfilling of HDPE Ducts for ICT Network - (ROUND-07)-Z5-RA07-ICT | 3d | 2027-08-14 | 2027-08-16 | RHD4CZ5RA07ICT2200 |  | -171d |
|  | 4279 | **RHD4-02-002-RA07-(ICT)-Information and Communication Technologies Manholes** |  | 2027-08-17 | 2027-08-21 |  |  |  |
| RHD4CZ5RA07ICT5100 |  | Excavation for Manholes for ICT Network - (ROUND-07)-Z5-RA07-ICT | 2d | 2027-08-17 | 2027-08-18 | RHD4ENSDZ5APPICT200, RHD4CZ5RA07ICT2400 |  | -171d |
| RHD4CZ5RA07ICT5200 |  | Installation of Manholes for ICT Network - (ROUND-07)-Z5-RA07-ICT | 2d | 2027-08-19 | 2027-08-21 | RHD4PRSHLDOSICT1200, RHD4PRSHLSTAGICT1200, RHD4CZ5RA07ICT5100 |  | -171d |
|  | 4268 | **RHD4-02-002-Z5-RA07-Landscape Network - LS** |  |  |  |  |  |  |
|  | 4269 | **RHD4-02-002-RA07-(LS)-Landscape Lighting cables** |  |  |  |  |  |  |
|  | 4270 | **RHD4-02-002-RA07-(LS)-Landscape Feeder Pillars** |  |  |  |  |  |  |
|  | 4271 | **RHD4-02-002-RA07-(LS)-Landscape Bollard Poles** |  |  |  |  |  |  |
|  | 4272 | **RHD4-02-002-RA07-(LS)-Landscape Feeder Pillars Earthing** |  |  |  |  |  |  |
|  | 4281 | **RHD4-02-002-Z5-RA07-Security Network - CCTV** |  | 2027-08-22 | 2027-10-04 |  |  |  |
|  | 4282 | **RHD4-02-002-RA07-(CCTV)-Civil Works** |  | 2027-08-22 | 2027-09-01 |  |  |  |
| RHD4CZ5RA07CCTV2100 |  | Civil Works for Security Network - (ROUND-07)-Z5-RA07-CCTV | 10d | 2027-08-22 | 2027-09-01 | RHD4CZ5RA07ICT5200 |  | -171d |
|  | 4283 | **RHD4-02-002-RA07-(CCTV)-CCTV Poles** |  | 2027-09-02 | 2027-09-13 |  |  |  |
| RHD4CZ5RA07CCTV1100 |  | Excavation for RC Base for CCTV Poles for Security Network - (ROUND-07)-Z5-RA07-CCTV | 2d | 2027-09-02 | 2027-09-04 | RHD4CZ5RA07CCTV2100, RHD4ENSDZ5APPCCTV210 |  | -171d |
| RHD4CZ5RA07CCTV1200 |  | Installation for RC Base for CCTV Poles for Security Network - (ROUND-07)-Z5-RA07-CCTV | 2d | 2027-09-05 | 2027-09-06 | RHD4CZ5RA07CCTV1100 |  | -171d |
| RHD4CZ5RA07CCTV1300 |  | Backfill for RC Base for CCTV Poles for Security Network - (ROUND-07)-Z5-RA07-CCTV | 2d | 2027-09-07 | 2027-09-08 | RHD4CZ5RA07CCTV1200 |  | -171d |
| RHD4CZ5RA07CCTV1400 |  | Installation for CCTV Poles for Security Network - (ROUND-07)-Z5-RA07-CCTV | 2d | 2027-09-09 | 2027-09-11 | RHD4CZ5RA07CCTV1300, RHD4PRSHLDOSCCTV1000, RHD4PRSHLSTACCTV1000 |  | -171d |
| RHD4CZ5RA07CCTV1500 |  | Protection post Installation for CCTV Poles for Security Network - (ROUND-07)-Z5-RA07-CCTV | 2d | 2027-09-12 | 2027-09-13 | RHD4CZ5RA07CCTV1400 |  | -157d |
|  | 4284 | **RHD4-02-002-RA07-(CCTV)-Camera** |  | 2027-09-14 | 2027-09-15 |  |  |  |
| RHD4CZ5RA07CCTV3100 |  | Installation for Cameras for Security Network - (ROUND-07)-Z5-RA07-CCTV | 2d | 2027-09-14 | 2027-09-15 | RHD4CZ5RA07CCTV1400, RHD4CZ5RA07CCTV4100, RHD4PRSHLDOSCCTV1100, RHD4PRSHLSTACCTV1100 |  | -171d |
|  | 4285 | **RHD4-02-002-RA07-(CCTV)-Power and Infrastructure** |  | 2027-09-12 | 2027-09-15 |  |  |  |
| RHD4CZ5RA07CCTV4100 |  | Installation of Power outlet, UPS and midspan for PTZ Camerafor Cameras for Security Network - (ROUND-07)-Z5-RA07-CCTV | 2d | 2027-09-12 | 2027-09-13 | RHD4CZ5RA07CCTV1400, RHD4PRSHLDOSCCTV1300, RHD4PRSHLSTACCTV1300 |  | -171d |
| RHD4CZ5RA07CCTV4200 |  | Short Range Wireless PoP wireless Bridgefor CCTV Poles for Security Network - (ROUND-07)-Z5-RA07-CCTV | 2d | 2027-09-14 | 2027-09-15 | RHD4CZ5RA07CCTV4100 |  | -171d |
|  | 4287 | **RHD4-02-002-RA07-(CCTV)-CCTV Panels and Components** |  | 2027-09-16 | 2027-10-04 |  |  |  |

| ID | WBS | Task | Duration | Start | Finish | Predecessors | Complete | Total float |
| --- | --- | --- | --- | --- | --- | --- | --- | --- |
| RHD4CZ5RA07CCTV6100 |  | Installation for CCTV Panels for Security Network - (ROUND-07)-Z5-RA07-CCTV | 15d | 2027-09-16 | 2027-10-04 | RHD4CZ5RA07CCTV4200, RHD4CZ5RA07CCTV3100, RHD4PRSHLDOSCCTV1200, RHD4PRSHLSTACCTV1200, RHD4PRLOLSTACCTV1001 |  | -171d |
|  | 4487 | **RHD4-02-002-Z5-C061** |  | 2026-05-12 | 2027-10-23 |  |  |  |
|  | 4518 | **RHD4-02-002-Z5-C061-Crossings Sewage Network - SWCr** |  |  |  |  |  |  |
|  | 4528 | **RHD4-02-002-C061-(SWCr)-MH Works - 1200 mm diameter** |  |  |  |  |  |  |
|  | 4529 | **RHD4-02-002-C061-(SWCr)-MH Works - 1200 mm diameter with Back drop** |  |  |  |  |  |  |
|  | 4520 | **RHD4-02-002-C061-(SWCr)-GRP Pipes - 400 mm diameter** |  |  |  |  |  |  |
|  | 4524 | **RHD4-02-002-C061-(SWCr)-UPVC Pipes - 200 mm diameter** |  |  |  |  |  |  |
|  | 4532 | **RHD4-02-002-C061-(SWCr)-Wash out Chambers** |  |  |  |  |  |  |
|  | 4533 | **RHD4-02-002-C061-(SWCr)-Wash out Valves** |  |  |  |  |  |  |
|  | 4539 | **RHD4-02-002-C061-(SWCr)-Gate Valves (Direct Buried)** |  |  |  |  |  |  |
|  | 4562 | **RHD4-02-002-Z5-C061-Crossings Potable Network - PTCr** |  |  |  |  |  |  |
|  | 4564 | **RHD4-02-002-C061-(PTCr)-HDPE Pipes - 160 mm diameter** |  |  |  |  |  |  |
|  | 4575 | **RHD4-02-002-C061-(PTCr)-Fire Hydrant** |  |  |  |  |  |  |
|  | 4666 | **RHD4-02-002-Z5-C061-Road Works - RD** |  | 2026-05-12 | 2027-10-23 |  |  |  |
|  | 4667 | **RHD4-02-002-C061-(RD)-Subgrade** |  | 2026-05-12 | 2026-05-23 |  |  |  |
| RHD4CZ5C061RD1100 |  | Supply, lay and compaction subgrade compacted thickness 300 mm for Roads - (RD-C-6 /1)-Z5-C061-RD | 7d | 2026-05-12 A | 2026-05-23 A | RHD4ENSDZ5APPRD220, RHD4ENSDZ5APPEW100 SS, RHD4CZ5C061ST3301, RHD4CZ5C061ST3300, RHD4CZ5C061ST1503, RHD4CZ5C061TC3400, RHD4CZ5C061ICT3400 | 100% |  |
|  | 4668 | **RHD4-02-002-C061-(RD)-Aggregate Base Course** |  | 2027-02-21 | 2027-02-25 |  |  |  |
| RHD4CZ5C061RD2100 |  | Supply, lay and compaction Aggregate base course compacted thickness 300 mmfor Roads - (RD-C-6 /1)-Z5-C061-RD | 4d | 2027-02-21 | 2027-02-25 | RHD4CZ5C061RD1100 |  | -162d |
|  | 4669 | **RHD4-02-002-C061-(RD)-Bituminous base course Two Layers, including (MC1)&(RC2)** |  | 2027-02-27 | 2027-10-10 |  |  |  |
| RHD4CZ5C061RD3100 |  | Supply, lay and Asphaltic base course including Prime Coat (MC1) for 1st Layer - (RD-C-6 /1)-Z5-C061-RD | 2d | 2027-02-27 | 2027-02-28 | RHD4CZ5C061RD2100, RHD4ENMSASPH2000, RHD4ENMSASPH2010 |  | -162d |
| RHD4CZ5C061RD3200 |  | Supply, lay and Asphaltic base course including Tack Coat (RC2) for 2nd Layer - (RD-C-6 /1)-Z5-C061-RD | 2d | 2027-10-09 | 2027-10-10 | RHD4PRSHLDOSRD1100, RHD4PRSHLSTAGRD1100, RHD4CZ5C061CCTV6100 |  | -172d |
|  | 4671 | **RHD4-02-002-C061-(RD)-Precast Concrete Curb** |  | 2027-10-11 | 2027-10-16 |  |  |  |
| RHD4CZ5C061RD5100 |  | Supply and installation Precast Concrete Kerb for Roads - (RD-C-6 /1)-Z5-C061-RD | 5d | 2027-10-11 | 2027-10-16 | RHD4CZ5C061RD3200, RHD4ENMSRD2000 |  | -172d |
|  | 4674 | **RHD4-02-002-C061-(RD)-Traffic Signage** |  | 2027-10-17 | 2027-10-23 |  |  |  |
| RHD4CZ5C061RD8100 |  | Installation of Traffic Signage for Road Network - (RD-C-6 /1)-Z5-C061-RD | 6d | 2027-10-17 | 2027-10-23 | RHD4CZ5C061RD5100 |  | -172d |
|  | 4672 | **RHD4-02-002-C061-(RD)-Precast Interlocking Block Pavers** |  |  |  |  |  |  |
|  | 4670 | **RHD4-02-002-C061-(RD)-Bituminous concrete wearing course including tack coat (RC2)** |  | 2027-10-17 | 2027-10-18 |  |  |  |
| RHD4CZ5C061RD4100 |  | Supply, lay and compaction Asphaltic wearing course including tack Coat (RC2)for Road Network - (RD-C-6 /1)-Z5-C061-RD | 2d | 2027-10-17 | 2027-10-18 | RHD4CZ5C061RD5100 |  | -172d |
|  | 4673 | **RHD4-02-002-C061-(RD)-Pavement Marking** |  | 2027-10-19 | 2027-10-23 |  |  |  |
| RHD4CZ5C061RD7100 |  | Pavement Markings for Road Network - (RD-C-6 /1)-Z5-C061-RD | 4d | 2027-10-19 | 2027-10-23 | RHD4CZ5C061RD4100 |  | -172d |
|  | 4491 | **RHD4-02-002-Z5-C061-Storm Network - ST** |  | 2026-08-04 | 2027-02-10 |  |  |  |
|  | 4509 | **RHD4-02-002-C061-(ST)-MH Works - 1500 mm diameter** |  | 2026-08-04 | 2027-02-03 |  |  |  |
| RHD4CZ5C061ST3101 |  | Excavation and PC Blinding works for MH 1500 mm - (RD-C-6 /1)-Z5-C061-ST | 3d | 2026-08-04 A | 2026-09-12 A | RHD4ENSDZ5APPST110, RHD4ENMSST2000, RHD4CZ5C051ST3101 | 100% |  |
| RHD4CZ5C061ST3201 |  | Installation of Base for MH 1500 mm - (RD-C-6 /1)-Z5-C061-ST | 3d | 2026-08-06 A | 2026-09-20 A | RHD4CZ5C061ST3101, RHD4PRSHLSTAGST1604 | 100% |  |
| RHD4CZ5C061ST3301 |  | MH Ring and C.Slab works and Backfilling works for MH 1500 mm - (RD-C-6 /1)-Z5-C061-ST | 3d | 2027-01-26 | 2027-01-28 | RHD4CZ5C061ST3201, RHD4PRSHLDOSST1604 |  | -176d |
| RHD4CZ5C061ST3401 |  | Steel Cover for MH 1500 mm - (RD-C-6 /1)-Z5-C061-ST | 2d | 2027-01-30 | 2027-01-31 | RHD4CZ5C061ST3301, RHD4PRSHLDOSST1704, RHD4PRSHLSTAGST1704 |  | -176d |
| RHD4CZ5C061ST3501 |  | Finishing, Benching, Testing works for MH 1500 mm - (RD-C-6 /1)-Z5-C061-ST | 3d | 2027-02-01 | 2027-02-03 | RHD4CZ5C061ST3401 |  | -176d |
|  | 4497 | **RHD4-02-002-C061-(ST)-GRP Pipes - 900 mm diameter** |  |  |  |  |  |  |
|  | 3752 | **RHD4-02-002-L016-(ST)-MH Works - 1200 mm diameter** |  | 2026-08-04 | 2027-02-01 |  |  |  |
| RHD4CZ5C061ST3100 |  | Excavation and PC Blinding works for MH 1200 mm - (RD-C-6 /1)-Z5-C061-ST | 2d | 2026-08-04 A | 2026-08-06 A | RHD4CZ5C061ST3101 | 100% |  |
| RHD4CZ5C061ST3200 |  | Installation of Base for MH 1200 mm - (RD-C-6 /1)-Z5-C061-ST | 2d | 2026-08-06 A | 2026-09-14 A | RHD4CZ5C061ST3100 | 100% |  |
| RHD4CZ5C061ST3300 |  | MH Ring and C.Slab works and Backfilling works for MH 1200 mm - (RD-C-6 /1)-Z5-C061-ST | 2d | 2027-01-26 | 2027-01-27 | RHD4CZ5C061ST3200 |  | -182d |
| RHD4CZ5C061ST3400 |  | Steel Cover for MH 1200 mm - (RD-C-6 /1)-Z5-C061-ST | 2d | 2027-01-28 | 2027-01-30 | RHD4CZ5C061ST3300 |  | -148d |
| RHD4CZ5C061ST3500 |  | Finishing, Benching, Testing works for MH 1200 mm - (RD-C-6 /1)-Z5-C061-ST | 2d | 2027-01-31 | 2027-02-01 | RHD4CZ5C061ST3400 |  | -148d |
|  | 1844 | **RHD4-02-002-L016-(ST)-GRP Pipes - 400 mm diameter** |  | 2026-08-04 | 2027-02-08 |  |  |  |
| RHD4CZ5C061ST1100 |  | Excavation works for GRP Pipe Line 400 mm - (RD-C-6 /1)-Z5-C061-ST | 2d | 2026-08-04 A | 2027-01-30 | RHD4CZ5C061ST3101, RHD4CZ5C061ST1103, RHD4CZ5C061ST3300 | 87% | -182d |
| RHD4CZ5C061ST1200 |  | Bedding works for GRP Pipe Line 400 mm - (RD-C-6 /1)-Z5-C061-ST | 2d | 2026-08-06 A | 2027-02-01 | RHD4CZ5C061ST1100 | 84% | -162d |
| RHD4CZ5C061ST1300 |  | Installing for GRP Pipe Line 400 mm - (RD-C-6 /1)-Z5-C061-ST | 2d | 2026-08-08 A | 2027-02-03 | RHD4CZ5C061ST1200 | 83% | -162d |
| RHD4CZ5C061ST1500 |  | Backfilling and warning tape works for GRP Pipe Line 400 mm - (RD-C-6 /1)-Z5-C061-ST | 2d | 2026-08-10 A | 2027-02-08 | RHD4CZ5C061ST1503, RHD4CZ5C061ST1400 | 84% | -162d |
| RHD4CZ5C061ST1400 |  | Primary Test for GRP Pipe Line 400 mm - (RD-C-6 /1)-Z5-C061-ST | 2d | 2027-02-04 | 2027-02-06 | RHD4CZ5C061ST1300 |  | -162d |
|  | 3739 | **RHD4-02-002-L016-(ST)-GRP Pipes - 700 mm diameter** |  | 2026-08-04 | 2027-01-30 |  |  |  |
| RHD4CZ5C061ST1103 |  | Excavation works for GRP Pipe Line 700 mm - (RD-C-6 /1)-Z5-C061-ST | 2d | 2026-08-04 A | 2026-10-13 A | RHD4CZ5C061ST3101, RHD4CZ5C061ST1104 | 100% |  |
| RHD4CZ5C061ST1203 |  | Bedding works for GRP Pipe Line 700 mm - (RD-C-6 /1)-Z5-C061-ST | 2d | 2026-08-06 A | 2026-10-15 A | RHD4CZ5C061ST1103 | 100% |  |
| RHD4CZ5C061ST1303 |  | Installing for GRP Pipe Line 700 mm - (RD-C-6 /1)-Z5-C061-ST | 2d | 2026-08-08 A | 2026-10-18 A | RHD4CZ5C061ST1203 | 100% |  |
| RHD4CZ5C061ST1503 |  | Backfilling and warning tape works for GRP Pipe Line 700 mm - (RD-C-6 /1)-Z5-C061-ST | 2d | 2026-08-10 A | 2026-11-01 A | RHD4CZ5C061ST1504, RHD4CZ5C061ST1403 | 100% |  |
| RHD4CZ5C061ST1403 |  | Primary Test for GRP Pipe Line 700 mm - (RD-C-6 /1)-Z5-C061-ST | 2d | 2027-01-28 | 2027-01-30 | RHD4CZ5C061ST1303 |  | -156d |
|  | 4496 | **RHD4-02-002-C061-(ST)-GRP Pipes - 800 mm diameter** |  | 2026-10-10 | 2027-02-06 |  |  |  |
| RHD4CZ5C061ST1104 |  | Excavation works for GRP Pipe Line 800 mm - (RD-C-6 /1)-Z5-C061-ST | 2d | 2026-10-10 A | 2027-01-27 | RHD4ENSDZ5APPST110, RHD4CZ5C061ST3101 | 63% | -182d |
| RHD4CZ5C061ST1204 |  | Bedding works for GRP Pipe Line 800 mm - (RD-C-6 /1)-Z5-C061-ST | 2d | 2026-10-12 A | 2027-01-30 | RHD4CZ5C061ST1104 | 63% | -178d |
| RHD4CZ5C061ST1304 |  | Installing for GRP Pipe Line 800 mm - (RD-C-6 /1)-Z5-C061-ST | 2d | 2026-10-20 A | 2027-02-01 | RHD4CZ5C061ST1204, RHD4PRSHLSTAGST1004, RHD4PRSHLDOSST1604, RHD4PRSHLPOST1000, RHD4PRSHLDOSST1004 | 63% | -178d |
| RHD4CZ5C061ST1504 |  | Backfilling and warning tape works for GRP Pipe Line 800 mm - (RD-C-6 /1)-Z5-C061-ST | 2d | 2026-10-21 A | 2027-02-06 | RHD4CZ5C061ST1404 | 63% | -178d |
| RHD4CZ5C061ST1404 |  | Primary Test for GRP Pipe Line 800 mm - (RD-C-6 /1)-Z5-C061-ST | 2d | 2027-02-02 | 2027-02-03 | RHD4CZ5C061ST1304 |  | -178d |
|  | 4506 | **RHD4-02-002-C061-(ST)-UPVC Pipes - 300 mm diameter** |  | 2027-01-30 | 2027-02-10 |  |  |  |
| RHD4CZ5C061ST2100 |  | Excavation works for UPVC Pipe Line 300 mm - (RD-C-6 /1)-Z5-C061-ST | 2d | 2027-01-30 | 2027-01-31 | RHD4CZ5C061ST3301, RHD4ENSDZ5APPST110 |  | -155d |
| RHD4CZ5C061ST2200 |  | Bedding works for UPVC Pipe Line 300 mm - (RD-C-6 /1)-Z5-C061-ST | 2d | 2027-02-01 | 2027-02-02 | RHD4CZ5C061ST2100 |  | -155d |
| RHD4CZ5C061ST2300 |  | Installing for UPVC Pipe Line 300 mm - (RD-C-6 /1)-Z5-C061-ST | 2d | 2027-02-03 | 2027-02-04 | RHD4CZ5C061ST2200, RHD4CZ5C061ST7300 SS, RHD4PRSHLDOSST1104, RHD4PRSHLSTAGST1104 |  | -155d |
| RHD4CZ5C061ST2400 |  | Primary Test for UPVC Pipe Line 300 mm - (RD-C-6 /1)-Z5-C061-ST | 2d | 2027-02-06 | 2027-02-07 | RHD4CZ5C061ST2300, RHD4CZ5C061ST6100 |  | -155d |
| RHD4CZ5C061ST2500 |  | Backfilling and warning tape works for UPVC Pipe Line 300 mm - (RD-C-6 /1)-Z5-C061-ST | 2d | 2027-02-09 | 2027-02-10 | RHD4CZ5C061ST2400, RHD4CZ5C061ST6100, RHD4CZ5C061ST1500 |  | -156d |
|  | 4514 | **RHD4-02-002-C061-(ST)-Concrete Encasement** |  | 2027-02-03 | 2027-02-04 |  |  |  |
| RHD4CZ5C061ST6100 |  | Pipe Encasement for Storm Pipelines - (RD-C-6 /1)-Z5-C061-ST | 2d | 2027-02-03 | 2027-02-04 | RHD4CZ5C061ST2300 SS, RHD4CZ5C061ST2300 FF, RHD4CZ5C061ST2200 |  | -155d |

| ID | WBS | Task | Duration | Start | Finish | Predecessors | Complete | Total float |
| --- | --- | --- | --- | --- | --- | --- | --- | --- |
|  | 4515 | **RHD4-02-002-Z5-C061-Catch Basin - ST** |  | 2026-08-29 | 2027-02-10 |  |  |  |
|  | 4516 | **RHD4-02-002-C061-(ST)-Single Catch Basin Works** |  | 2026-08-29 | 2027-02-10 |  |  |  |
| RHD4CZ5C061ST7100 |  | Excavation works for Single Catch Basin - (RD-C-6 /1)-Z5-C061-ST | 2d | 2026-08-29 A | 2027-01-31 | RHD4CZ5C061ST3301, RHD4ENSDZ5APPST110 | 7% | -164d |
| RHD4CZ5C061ST7200 |  | PC Blinding, Installation and Pipe connection for Single Catch Basin - (RD-C-6 /1)-Z5-C061-ST | 2d | 2026-08-31 A | 2027-02-02 | RHD4CZ5C061ST7100 | 7% | -164d |
| RHD4CZ5C061ST7300 |  | Rings & C.Slab & Final Backfill for Single Catch Basin - (RD-C-6 /1)-Z5-C061-ST | 2d | 2027-02-03 | 2027-02-04 | RHD4CZ5C061ST7200, RHD4PRSHLDOSST1304, RHD4PRSHLSTAGST1304 |  | -164d |
| RHD4CZ5C061ST7400 |  | Steel Cover for Single Catch Basin - (RD-C-6 /1)-Z5-C061-ST | 2d | 2027-02-06 | 2027-02-07 | RHD4CZ5C061ST7300, RHD4PRSHLDOSST1704 |  | -164d |
| RHD4CZ5C061ST7500 |  | Finishing and Insulation works for Single Catch Basin - (RD-C-6 /1)-Z5-C061-ST | 3d | 2027-02-08 | 2027-02-10 | RHD4CZ5C061ST7400 |  | -164d |
|  | 4299 | **RHD4-02-002-Z5-C061-Concrete Box Culvert - ST** |  | 2026-06-11 | 2027-02-02 |  |  |  |
|  | 4300 | **RHD4-02-002-L061-(ST)-Concrete Box Culvert** |  | 2026-06-11 | 2027-02-02 |  |  |  |
| RHD4CZ5C061ST4100 |  | Excavation works for Box Culvert - (RD-C-6/1)-Z5-C061-ST(Completed) | 9d | 2026-06-11 A | 2026-06-13 A | RHD4PRSHLDOSST1003 | 100% |  |
| RHD4CZ5C061ST4200 |  | PC works for Box Culvert - (RD-C-6/1)-Z5-C061-ST(Completed) | 5d | 2026-06-15 A | 2026-06-18 A | RHD4CZ5C061ST4100 | 100% |  |
| RHD4CZ5C061ST4400 |  | Raft works for Box Culvert - (RD-C-6/1)-Z5-C061-ST(Completed) | 7d | 2026-07-11 A | 2026-07-16 A | RHD4CZ5C061ST4200 | 100% |  |
| RHD4CZ5C061ST4500 |  | Wall and slab works for Box Culvert - (RD-C-6/1)-Z5-C061-ST | 5d | 2026-08-04 A | 2026-09-20 A | RHD4CZ5C061ST4400, RHD4CZ5C061ST4200, RHD4CZ5C061ST4100 | 100% |  |
| RHD4CZ5C061ST4600 |  | Insulation and Testing for Box Culvert - (RD-C-6/1)-Z5-C061-ST | 4d | 2026-09-19 A | 2027-02-02 | RHD4CZ5C061ST4700, RHD4CZ5C061ST5400, RHD4CZ5C061ST3500 | 80% | -148d |
| RHD4CZ5C061ST4700 |  | Backfilling works for Box Culvert - (RD-C-6/1)-Z5-C061-ST | 15d | 2026-10-01 A | 2026-10-18 A | RHD4CZ5C061ST4500, RHD4CZ5C061ST5300 | 100% |  |
|  | 4301 | **RHD4-02-002-L061-(ST)-Concrete Chambers** |  | 2026-08-20 | 2027-01-10 |  |  |  |
| RHD4CZ5C061ST5100 |  | Excavation and Bedding for Concrete Chambers - for Box Culvert - (RD-C-6/1)-Z5-C061-ST | 2d | 2026-08-20 A | 2027-01-03 | RHD4CZ5C061ST4500 | 50% | -129d |
| RHD4CZ5C061ST5200 |  | PC works for Concrete Chambers - for Box Culvert - (RD-C-6/1)-Z5-C061-ST | 2d | 2026-08-25 A | 2027-01-05 | RHD4CZ5C061ST5100 | 50% | -129d |
| RHD4CZ5C061ST5300 |  | Installation for Concrete Chambers - for Box Culvert - (RD-C-6/1)-Z5-C061-ST | 2d | 2026-08-30 A | 2027-01-07 | RHD4CZ5C061ST5200 | 50% | -129d |
| RHD4CZ5C061ST5400 |  | Backfilling works for Concrete Chambers - for Box Culvert - (RD-C-6/1)-Z5-C061-ST | 2d | 2027-01-09 | 2027-01-10 | RHD4CZ5C061ST5300 |  | -129d |
|  | 4540 | **RHD4-02-002-Z5-C061-Sewage Network - SW** |  | 2026-08-09 | 2027-03-14 |  |  |  |
|  | 1 | **Missing ID** |  | 2027-02-14 | 2027-02-25 |  |  |  |
| RHD4CZ5C061SW4100 |  | Excavation and Bedding for Wash out Chamber for HDPE force Main - (RD-C-6 /1)-Z5-C061-SW | 2d | 2027-02-14 | 2027-02-15 | RHD4CZ5C061ST3101 SS, RHD4CZ5C061SW2600 |  | -192d |
| RHD4CZ5C061SW4200 |  | PC works for Wash out Chamber for HDPE force Main - (RD-C-6 /1)-Z5-C061-SW | 2d | 2027-02-16 | 2027-02-17 | RHD4CZ5C061SW4100 |  | -192d |
| RHD4CZ5C061SW4300 |  | Installation for Wash out Chamber for HDPE force Main - (RD-C-6 /1)-Z5-C061-SW | 2d | 2027-02-18 | 2027-02-19 | RHD4CZ5C061SW4200 |  | -192d |
| RHD4CZ5C061SW4400 |  | Backfilling works for Wash out Chamber for HDPE force Main - (RD-C-6 /1)-Z5-C061-SW | 2d | 2027-02-20 | 2027-02-21 | RHD4CZ5C061SW4300 |  | -192d |
| RHD4CZ5C061SW5100 |  | Installation for Wash out Valves for HDPE force Main - (RD-C-6 /1)-Z5-C061-SW | 2d | 2027-02-22 | 2027-02-23 | RHD4CZ5C061SW4400 |  | -192d |
| RHD4CZ5C061SW5200 |  | Stem and Service box for Wash out Valves for HDPE force Main - (RD-C-6 /1)-Z5-C061-SW | 2d | 2027-02-24 | 2027-02-25 | RHD4CZ5C061SW5100, RHD4CZ5C061SW3000 |  | -192d |
|  | 4358 | **RHD4-02-002-C061-(SW)-HDPE Pipes - 250 mm diameter** |  | 2027-02-11 | 2027-02-23 |  |  |  |
| RHD4CZ5C061SW2600 |  | Excavation works for HDPE Force Main Pipeline 250 mm - (RD-C-6 /1)-Z5-C061-SW | 2d | 2027-02-11 | 2027-02-13 | RHD4CZ5C061SW3100 |  | -163d |
| RHD4CZ5C061SW2700 |  | Bedding works for HDPE Force Main Pipeline 250 mm - (RD-C-6 /1)-Z5-C061-SW | 2d | 2027-02-14 | 2027-02-15 | RHD4CZ5C061SW2600 |  | -163d |
| RHD4CZ5C061SW2800 |  | Installing for HDPE Force Main Pipeline 250 mm - (RD-C-6 /1)-Z5-C061-SW | 2d | 2027-02-16 | 2027-02-17 | RHD4CZ5C061SW2700 |  | -163d |
| RHD4CZ5C061SW2900 |  | Primary Test for HDPE Force Main Pipeline 250 mm - (RD-C-6 /1)-Z5-C061-SW | 2d | 2027-02-18 | 2027-02-20 | RHD4CZ5C061SW2800 |  | -163d |
| RHD4CZ5C061SW3000 |  | Backfilling and warning tape works for HDPE Force Main Pipeline 250 mm - (RD-C-6 /1)-Z5-C061-SW | 2d | 2027-02-21 | 2027-02-23 | RHD4CZ5C061ST4600, RHD4CZ5C061SW2900 |  | -163d |
|  | 4550 | **RHD4-02-002-C061-(SW)-MH Works - 1200 mm diameter** |  | 2026-08-15 | 2027-03-08 |  |  |  |
| RHD4CZ5C061SW3100 |  | Excavation and PC Blinding works for MH 1200 mm - (RD-C-6 /1)-Z5-C061-SW | 4d | 2026-08-15 A | 2027-02-10 | RHD4ENSDZ5APPSW120, RHD4CZ5C061ST1504 | 70% | -178d |
| RHD4CZ5C061SW3200 |  | Installation of Base for MH 1200 mm - (RD-C-6 /1)-Z5-C061-SW | 7d | 2026-08-17 A | 2027-02-15 | RHD4CZ5C061SW3100 | 50% | -178d |
| RHD4CZ5C061SW3300 |  | MH Ring and C.Slab works and Backfilling works for MH 1200 mm - (RD-C-6 /1)-Z5-C061-SW | 7d | 2027-02-16 | 2027-02-24 | RHD4CZ5C061SW3200 |  | -178d |
| RHD4CZ5C061SW3400 |  | Steel Cover for MH 1200 mm - (RD-C-6 /1)-Z5-C061-SW | 3d | 2027-02-25 | 2027-02-28 | RHD4CZ5C061SW3300, RHD4PRSHLDOSSW1404, RHD4PRSHLSTAGSW1404 |  | -170d |
| RHD4CZ5C061SW3500 |  | Finishing, Benching, Testing works for MH 1200 mm - (RD-C-6 /1)-Z5-C061-SW | 7d | 2027-03-01 | 2027-03-08 | RHD4CZ5C061SW3400 |  | -170d |
|  | 4551 | **RHD4-02-002-C061-(SW)-MH Works - 1200 mm diameter with Back drop** |  | 2026-08-09 | 2027-03-14 |  |  |  |
| RHD4CZ5C061SW3101 |  | Excavation and PC Blinding works for MH 1200 mm - (RD-C-6 /1)-Z5-C061-SW | 2d | 2026-08-09 A | 2026-08-10 A | RHD4CZ5C061SW3100, RHD4ENSDZ5APPSW120 | 100% |  |
| RHD4CZ5C061SW3201 |  | Installation of Base for MH 1200 mm - (RD-C-6 /1)-Z5-C061-SW | 2d | 2026-08-12 A | 2026-08-13 A | RHD4CZ5C061SW3101 | 100% |  |
| RHD4CZ5C061SW3301 |  | MH Ring and C.Slab works and Backfilling works for MH 1200 mm - (RD-C-6 /1)-Z5-C061-SW | 2d | 2027-02-11 | 2027-02-13 | RHD4CZ5C061SW3201 |  | -169d |
| RHD4CZ5C061SW3401 |  | Steel Cover for MH 1200 mm - (RD-C-6 /1)-Z5-C061-SW | 2d | 2027-03-01 | 2027-03-02 | RHD4CZ5C061SW3301, RHD4PRSHLDOSSW1404, RHD4PRSHLSTAGSW1404, RHD4CZ5C061SW3400 |  | -165d |
| RHD4CZ5C061SW3501 |  | Finishing, Benching, Testing works for MH 1200 mm - (RD-C-6 /1)-Z5-C061-SW | 2d | 2027-03-13 | 2027-03-14 | RHD4CZ5C061SW3401, RHD4CZ5C061SW3500 |  | -170d |
|  | 4542 | **RHD4-02-002-C061-(SW)-GRP Pipes - 400 mm diameter** |  | 2026-09-15 | 2027-03-08 |  |  |  |
| RHD4CZ5C061SW1101 |  | Excavation works for GRP Pipe Line 400 mm - (RD-C-6 /1)-Z5-C061-SW | 2d | 2026-09-15 A | 2027-02-27 | RHD4ENSDZ5APPSW120, RHD4CZ5C061SW3300, RHD4CZ5C061SW3301 |  | -178d |
| RHD4CZ5C061SW1201 |  | Bedding works for GRP Pipe Line 400 mm - (RD-C-6 /1)-Z5-C061-SW | 2d | 2027-02-28 | 2027-03-01 | RHD4CZ5C061SW1101 |  | -178d |
| RHD4CZ5C061SW1301 |  | Installing for GRP Pipe Line 400 mm - (RD-C-6 /1)-Z5-C061-SW | 2d | 2027-03-02 | 2027-03-03 | RHD4CZ5C061SW1201, RHD4CZ5C061SW3300, RHD4CZ5C061SW3301, RHD4PRSHLSTAGSW1104, RHD4PRSHLDOSSW1304, RHD4PRSHLPOSW1100, RHD4PRSHLDOSSW1104 |  | -178d |
| RHD4CZ5C061SW1401 |  | Primary Test for GRP Pipe Line 400 mm - (RD-C-6 /1)-Z5-C061-SW | 2d | 2027-03-04 | 2027-03-06 | RHD4CZ5C061SW1301 |  | -178d |
| RHD4CZ5C061SW1501 |  | Backfilling and warning tape works for GRP Pipe Line 400 mm - (RD-C-6 /1)-Z5-C061-SW | 2d | 2027-03-07 | 2027-03-08 | RHD4CZ5C061SW1401 |  | -176d |
|  | 4541 | **RHD4-02-002-C061-(SW)-GRP Pipes - 300 mm diameter** |  | 2026-09-05 | 2027-03-08 |  |  |  |
| RHD4CZ5C061SW1100 |  | Excavation works for GRP Pipe Line 300 mm - (RD-C-6 /1)-Z5-C061-SW | 2d | 2026-09-05 A | 2026-09-16 A | RHD4CZ5C061SW1101, RHD4ENSDZ5APPSW120 | 100% |  |
| RHD4CZ5C061SW1200 |  | Bedding works for GRP Pipe Line 300 mm - (RD-C-6 /1)-Z5-C061-SW | 2d | 2026-09-07 A | 2026-09-17 A | RHD4CZ5C061SW1100 | 100% |  |
| RHD4CZ5C061SW1300 |  | Installing for GRP Pipe Line 300 mm - (RD-C-6 /1)-Z5-C061-SW | 2d | 2026-09-09 A | 2026-09-19 A | RHD4CZ5C061SW1200, RHD4CZ5C061SW1301, RHD4CZ5C061SW3300, RHD4CZ5C061SW3301, RHD4PRSHLSTAGSW1104, RHD4PRSHLDOSSW1304, RHD4PRSHLPOSW1100, RHD4PRSHLDOSSW1104 | 100% |  |
| RHD4CZ5C061SW1500 |  | Backfilling and warning tape works for GRP Pipe Line 300 mm - (RD-C-6 /1)-Z5-C061-SW | 2d | 2026-09-14 A | 2026-09-20 A | RHD4CZ5C061SW1400, RHD4CZ5C061SW1501 | 100% |  |
| RHD4CZ5C061SW1400 |  | Primary Test for GRP Pipe Line 300 mm - (RD-C-6 /1)-Z5-C061-SW | 2d | 2027-03-07 | 2027-03-08 | RHD4CZ5C061SW1300, RHD4CZ5C061SW1401 |  | -178d |
|  | 4546 | **RHD4-02-002-C061-(SW)-UPVC Pipes - 200 mm diameter** |  | 2026-08-09 | 2027-03-14 |  |  |  |
| RHD4CZ5C061SW2100 |  | Excavation works for UPVC Pipe Line 200 mm - (RD-C-6 /1)-Z5-C061-SW | 2d | 2026-08-09 A | 2026-09-10 A | RHD4CZ5C061SW3300, RHD4CZ5C061SW3301, RHD4ENSDZ5APPSW120, RHD4PRSHLSTAGIRR1000, RHD4ENMSEW2000, RHD4ENMSEW2010, RHD4ENSDZ5APPEW100 SS | 100% |  |
| RHD4CZ5C061SW2200 |  | Bedding works for UPVC Pipe Line 200 mm - (RD-C-6 /1)-Z5-C061-SW | 2d | 2026-08-10 A | 2026-09-13 A | RHD4CZ5C061SW2100 | 100% |  |
| RHD4CZ5C061SW2300 |  | Installing for UPVC Pipe Line 200 mm - (RD-C-6 /1)-Z5-C061-SW | 2d | 2026-08-12 A | 2026-09-14 A | RHD4CZ5C061SW2200, RHD4CZ5C061SW1300, RHD4PRSHLSTAGSW1004, RHD4PRSHLPOSW1000, RHD4PRSHLDOSSW1004, RHD4PRSHLDOSSW1304, RHD4PRSHLPOSW1100, RHD4PRSHLDOSSW1104 | 100% |  |
| RHD4CZ5C061SW2500 |  | Backfilling and warning tape works for UPVC Pipe Line 200 mm - (RD-C-6 /1)-Z5-C061-SW | 2d | 2026-08-15 A | 2026-09-17 A | RHD4CZ5C061SW2400, RHD4CZ5C061SW1500 | 100% |  |
| RHD4CZ5C061SW2400 |  | Primary Test for UPVC Pipe Line 200 mm - (RD-C-6 /1)-Z5-C061-SW | 2d | 2027-03-13 | 2027-03-14 | RHD4CZ5C061SW2300, RHD4CZ5C061SW1400 |  | -178d |
|  | 4549 | **RHD4-02-002-C061-(SW)-Concrete Encasement** |  |  |  |  |  |  |
|  | 4577 | **RHD4-02-002-Z5-C061-Potable Network - PT** |  | 2027-03-15 | 2027-04-01 |  |  |  |
|  | 4579 | **RHD4-02-002-C061-(PT)-HDPE Pipes - 160 mm diameter** |  | 2027-03-15 | 2027-03-30 |  |  |  |
| RHD4CZ5C061PT1101 |  | Excavation works for HDPE Pipline 160 mm - (RD-C-6 /1)-Z5-C061-PT | 2d | 2027-03-15 | 2027-03-16 | RHD4ENSDZ5APPPT130, RHD4ENMSPT2000, RHD4CZ5C061SW2500 |  | -178d |
| RHD4CZ5C061PT1201 |  | Bedding works for HDPE Pipline 160 mm - (RD-C-6 /1)-Z5-C061-PT | 2d | 2027-03-17 | 2027-03-18 | RHD4CZ5C061PT1101 |  | -178d |
| RHD4CZ5C061PT1301 |  | Installing for HDPE Pipline 160 mm - (RD-C-6 /1)-Z5-C061-PT | 3d | 2027-03-20 | 2027-03-22 | RHD4CZ5C061PT1201, RHD4PRSHLDOSPT1000, RHD4PRSHLSTAGPT1000 |  | -178d |

| ID | WBS | Task | Duration | Start | Finish | Predecessors | Total float |
| --- | --- | --- | --- | --- | --- | --- | --- |
| RHD4CZ5C061PT1401 |  | Primary Test for HDPE Pipline 160 mm - (RD-C-6 /1)-Z5-C061-PT | 2d | 2027-03-25 | 2027-03-27 | RHD4CZ5C061PT1301, RHD4CZ5C061PT5100, RHD4CZ5C061PT3100 | -178d |
| RHD4CZ5C061PT1501 |  | Backfilling and warning tape works for HDPE Pipline 160 mm - (RD-C-6 /1)-Z5-C061-PT | 3d | 2027-03-28 | 2027-03-30 | RHD4CZ5C061PT1401 | -178d |
|  | 2888 | **RHD4-02-002-C061-(PT)-Fire Hydrant** |  | 2027-03-20 | 2027-03-30 |  |  |
| RHD4CZ5C061PT4100 |  | Excavation and Bedding and Pipe Installation for Fire Hydrant - (ROUND-07)-Z5-RA07-PT | 2d | 2027-03-20 | 2027-03-21 | RHD4CZ5C061PT2101 | -176d |
| RHD4CZ5C061PT4200 |  | Valve Installation for Fire Hydrant - (ROUND-07)-Z5-RA07-PT | 2d | 2027-03-22 | 2027-03-23 | RHD4CZ5C061PT4100 | -176d |
| RHD4CZ5C061PT4300 |  | Stem for Fire Hydrant - (ROUND-07)-Z5-RA07-PT | 2d | 2027-03-24 | 2027-03-25 | RHD4CZ5C061PT4200 | -176d |
| RHD4CZ5C061PT4400 |  | Fire Installation for Fire Hydrant - (ROUND-07)-Z5-RA07-PT | 2d | 2027-03-27 | 2027-03-28 | RHD4CZ5C061PT4300 | -176d |
| RHD4CZ5C061PT4500 |  | Protection Barriers for Fire Hydrant - (ROUND-07)-Z5-RA07-PT | 2d | 2027-03-29 | 2027-03-30 | RHD4CZ5C061PT4400 | -176d |
|  | 4586 | **RHD4-02-002-C061-(PT)-Wash out Valve Chambers** |  | 2027-03-17 | 2027-03-25 |  |  |
| RHD4CZ5C061PT2101 |  | Excavation and Bedding for Wash out Valve Chambers for Potable Water Network - (RD-C-6 /1)-Z5-C061-PT | 2d | 2027-03-17 | 2027-03-18 | RHD4ENSDZ5APPPT130, RHD4CZ5C061PT1101 | -176d |
| RHD4CZ5C061PT2201 |  | PC works for Wash out Valve Chambers for Potable Water Network - (RD-C-6 /1)-Z5-C061-PT | 2d | 2027-03-20 | 2027-03-21 | RHD4CZ5C061PT2101 | -174d |
| RHD4CZ5C061PT2301 |  | Installation for Wash out Valve Chambers for Potable Water Network - (RD-C-6 /1)-Z5-C061-PT | 2d | 2027-03-22 | 2027-03-23 | RHD4CZ5C061PT2201, RHD4PRSHLDOSPT1100, RHD4PRSHLDOSPT1400, RHD4PRSHLSTAGPT1100, RHD4PRSHLSTAGPT1400 | -174d |
| RHD4CZ5C061PT2401 |  | Backfilling works for Wash out Valve Chambers for Potable Water Network - (RD-C-6 /1)-Z5-C061-PT | 2d | 2027-03-24 | 2027-03-25 | RHD4CZ5C061PT2301 | -174d |
|  | 4587 | **RHD4-02-002-C061-(PT)-Wash out Valves** |  | 2027-03-24 | 2027-03-28 |  |  |
| RHD4CZ5C061PT3102 |  | Installation for Wash out Valves for Potable Water Network - (RD-C-6 /1)-Z5-C061-PT | 2d | 2027-03-24 | 2027-03-25 | RHD4CZ5C061PT2301, RHD4PRSHLDOSPT1200, RHD4PRSHLSTAGPT1200 | -174d |
| RHD4CZ5C061PT3202 |  | Stem and Service box for Wash out Valves for Potable Water Network - (RD-C-6 /1)-Z5-C061-PT | 2d | 2027-03-27 | 2027-03-28 | RHD4CZ5C061PT3102, RHD4CZ5C061PT2401, RHD4PRSHLDOSPT1300, RHD4PRSHLSTAGPT1300 | -174d |
|  | 4591 | **RHD4-02-002-C061-(PT)-Concrete Encasement** |  | 2027-03-20 | 2027-03-24 |  |  |
| RHD4CZ5C061PT5100 |  | Pipe Encasement for Potable Pipelines - (RD-C-6 /1)-Z5-C061-PT | 5d | 2027-03-20 | 2027-03-24 | RHD4CZ5C061PT1301 FF, RHD4CZ5C061PT1301 SS, RHD4CZ5C061PT1201 | -178d |
|  | 4583 | **RHD4-02-002-C061-(PT)-Gate Valves (Direct Buried)** |  | 2027-03-21 | 2027-04-01 |  |  |
| RHD4CZ5C061PT3100 |  | Installation for Direct Buried Gate Valves - (RD-C-6 /1)-Z5-C061-PT | 2d | 2027-03-21 | 2027-03-22 | RHD4CZ5C061PT1301 FF, RHD4CZ5C061PT1301 SS, RHD4PRSHLDOSPT1200, RHD4PRSHLSTAGPT1200, RHD4CZ5C061RD3100 | -176d |
| RHD4CZ5C061PT3200 |  | Stem and Service box for Direct Buried Gate Valves - (RD-C-6 /1)-Z5-C061-PT | 2d | 2027-03-31 | 2027-04-01 | RHD4CZ5C061PT3100, RHD4CZ5C061PT1501 | -178d |
|  | 4592 | **RHD4-02-002-Z5-C061-Irrigation Network - IRR** |  | 2027-03-17 | 2027-03-28 |  |  |
|  | 4595 | **RHD4-02-002-C061-(IRR)-HDPE Pipes - 200 mm diameter** |  | 2027-03-17 | 2027-03-28 |  |  |
| RHD4CZ5C061IRR1102 |  | Excavation works for HDPE Pipline 200 mm - (RD-C-6 /1)-Z5-C061-IRR | 2d | 2027-03-17 | 2027-03-18 | RHD4CZ5C061PT1101, RHD4ENSDZ5APPIRR140, RHD4ENMSRR2000 | -174d |
| RHD4CZ5C061IRR1202 |  | Bedding works for HDPE Pipline 200 mm - (RD-C-6 /1)-Z5-C061-IRR | 2d | 2027-03-20 | 2027-03-21 | RHD4CZ5C061IRR1102 | -174d |
| RHD4CZ5C061IRR1302 |  | Installing for HDPE Pipline 200 mm - (RD-C-6 /1)-Z5-C061-IRR | 2d | 2027-03-22 | 2027-03-23 | RHD4CZ5C061IRR1202, RHD4PRSHLDOSIRR1000, RHD4PRSHLSTAGIRR1000 | -174d |
| RHD4CZ5C061IRR1402 |  | Primary Test for HDPE Pipline 200 mm - (RD-C-6 /1)-Z5-C061-IRR | 2d | 2027-03-24 | 2027-03-25 | RHD4CZ5C061IRR1302 | -174d |
| RHD4CZ5C061IRR1502 |  | Backfilling and warning tape works for HDPE Pipline 200 mm - (RD-C-6 /1)-Z5-C061-IRR | 2d | 2027-03-27 | 2027-03-28 | RHD4CZ5C061IRR1402 | -174d |
|  | 4601 | **RHD4-02-002-C061-(IRR)-Gate Valves (Direct Buried)** |  |  |  |  |  |
|  | 4609 | **RHD4-02-002-Z5-C061-Crossings Irrigation Network - IRRC** |  |  |  |  |  |
|  | 4621 | **RHD4-02-002-C061-(IRRC)-Wash out Chamber** |  |  |  |  |  |
|  | 4622 | **RHD4-02-002-C061-(IRRC)-Wash out Valves** |  |  |  |  |  |
|  | 4626 | **RHD4-02-002-Z5-C061-Medium Voltage Network - MV** |  | 2027-03-29 | 2027-08-25 |  |  |
|  | 4627 | **RHD4-02-002-C061-(MV)-Medium Voltage cable trench** |  | 2027-08-01 | 2027-08-10 |  |  |
| RHD4CZ5C061MV1100 |  | Excavation for Medium Voltage Trench - (RD-C-6 /1)-Z5-C061-MV | 3d | 2027-08-01 | 2027-08-03 | RHD4ENSDZ5APPMV150, RHD4CZ5C061RD3100, RHD4CZ5RA07MV5400 | -172d |
| RHD4CZ5C061MV1200 |  | Trench Backfilling for Medium Voltage Network - (RD-C-6 /1)-Z5-C061-MV | 3d | 2027-08-08 | 2027-08-10 | RHD4CZ5C061MV3101, RHD4CZ5C061MV3100 | -172d |
|  | 4628 | **RHD4-02-002-C061-(MV)-Medium Voltage duct banks** |  | 2027-03-29 | 2027-04-06 |  |  |
| RHD4CZ5C061MV2100 |  | Excavation of Duct Banks for Medium Voltage Network - (RD-C-6 /1)-Z5-C061-MV | 2d | 2027-03-29 | 2027-03-30 | RHD4ENSDZ5APPMV150, RHD4CZ5C061IRR1102, RHD4CZ5C061IRR1502 | -136d |
| RHD4CZ5C061MV2200 |  | Installation of Duct Banks for Medium Voltage Network - (RD-C-6 /1)-Z5-C061-MV | 2d | 2027-03-31 | 2027-04-01 | RHD4CZ5C061MV2100, RHD4PRSHLDOSMV1000, RHD4PRSHLSTAGMV1000 | -136d |
| RHD4CZ5C061MV2300 |  | Pouring of Duct Banks for Medium Voltage Network - (RD-C-6 /1)-Z5-C061-MV | 2d | 2027-04-03 | 2027-04-04 | RHD4CZ5C061MV2200 | -136d |
| RHD4CZ5C061MV2400 |  | Backfilling of Duct Banks for Medium Voltage Network - (RD-C-6 /1)-Z5-C061-MV | 2d | 2027-04-05 | 2027-04-06 | RHD4CZ5C061MV2300 | -136d |
|  | 4629 | **RHD4-02-002-C061-(MV)-Medium Voltage cables 3Cx 500 mm²** |  | 2027-08-04 | 2027-08-15 |  |  |
| RHD4CZ5C061MV3100 |  | Installation of Medium Voltage Cables 3Cx 500 mm² - (RD-C-6 /1)-Z5-C061-MV | 3d | 2027-08-04 | 2027-08-07 | RHD4CZ5C061MV1100, RHD4PRSHLDOSMV1100, RHD4ENMSMV2000, RHD4ENMSMV2010, RHD4PRSHLSTAGMV1100, RHD4CZ5C061MV2400 | -172d |
| RHD4CZ5C061MV3300 |  | Testing of Medium Voltage Cables 3Cx 500 mm² - (RD-C-6 /1)-Z5-C061-MV | 2d | 2027-08-11 | 2027-08-12 | RHD4CZ5C061MV1200, RHD4CZ5C061MV3100 | -163d |
| RHD4CZ5C061MV3400 |  | Termination of Medium Voltage Cables 3Cx 500 mm² - (RD-C-6 /1)-Z5-C061-MV | 2d | 2027-08-14 | 2027-08-15 | RHD4CZ5C061MV3300 | -163d |
|  | 4630 | **RHD4-02-002-C061-(MV)-Medium Voltage cables 3Cx 50 mm²** |  | 2027-08-04 | 2027-08-15 |  |  |
| RHD4CZ5C061MV3101 |  | Installation of Medium Voltage Cables 3Cx 50 mm² - (RD-C-6 /1)-Z5-C061-MV | 2d | 2027-08-04 | 2027-08-05 | RHD4CZ5C061MV1100, RHD4PRSHLDOSMV1200, RHD4ENMSMV2000, RHD4ENMSMV2010, RHD4PRSHLSTAGMV1200 | -171d |
| RHD4CZ5C061MV3301 |  | Testing of Medium Voltage Cables 3Cx 50 mm² - (RD-C-6 /1)-Z5-C061-MV | 2d | 2027-08-11 | 2027-08-12 | RHD4CZ5C061MV3101, RHD4CZ5C061MV1200 | -163d |
| RHD4CZ5C061MV3401 |  | Termination of Medium Voltage Cables 3Cx 50 mm² - (RD-C-6 /1)-Z5-C061-MV | 2d | 2027-08-14 | 2027-08-15 | RHD4CZ5C061MV3301 | -163d |
|  | 4632 | **RHD4-02-002-C061-(MV)-Unit Substations** |  | 2027-08-11 | 2027-08-25 |  |  |
| RHD4CZ5C061MV5100 |  | Excavation for Unit Substations for Medium Voltage Network - (RD-C-6 /1)-Z5-C061-MV | 2d | 2027-08-11 | 2027-08-12 | RHD4CZ5C061MV1200, RHD4ENSDZ5APPMV150 | -172d |
| RHD4CZ5C061MV5200 |  | Concrete Base Placement for Unit Substations for Medium Voltage Network - (RD-C-6 /1)-Z5-C061-MV | 2d | 2027-08-14 | 2027-08-15 | RHD4CZ5C061MV5100 | -172d |
| RHD4CZ5C061MV5300 |  | Installation for Fences and doors for Medium Voltage Network - (RD-C-6 /1)-Z5-C061-MV | 5d | 2027-08-16 | 2027-08-21 | RHD4CZ5C061MV5200 | -172d |
| RHD4CZ5C061MV5400 |  | Installation for Unit Substations for Medium Voltage Network - (RD-C-6 /1)-Z5-C061-MV | 4d | 2027-08-22 | 2027-08-25 | RHD4CZ5C061MV5300 | -172d |
|  | 4633 | **RHD4-02-002-Z5-C061-Low Voltage Network - LV** |  | 2027-04-28 | 2027-05-31 |  |  |
|  | 4634 | **RHD4-02-002-C061-(LV)-Low Voltage duct banks** |  | 2027-04-28 | 2027-05-06 |  |  |
| RHD4CZ5C061LV2100 |  | Excavation of Duct Banks for Low Voltage Network - (RD-C-6 /1)-Z5-C061-LV | 2d | 2027-04-28 | 2027-04-29 | RHD4CZ5C061RW3000, RHD4ENSDZ5APPLV160, RHD4CZ5RA07SL2100 | -142d |
| RHD4CZ5C061LV2200 |  | Installation of Duct Banks for Low Voltage Network - (RD-C-6 /1)-Z5-C061-LV | 2d | 2027-05-01 | 2027-05-02 | RHD4CZ5C061LV2100, RHD4PRSHLDOSLV1000, RHD4PRSHLSTAGLV1000 | -142d |
| RHD4CZ5C061LV2300 |  | Pouring of Duct Banks for Low Voltage Network - (RD-C-6 /1)-Z5-C061-LV | 2d | 2027-05-03 | 2027-05-04 | RHD4CZ5C061LV2200 | -142d |
| RHD4CZ5C061LV2400 |  | Backfilling of Duct Banks for Low Voltage Network - (RD-C-6 /1)-Z5-C061-LV | 2d | 2027-05-05 | 2027-05-06 | RHD4CZ5C061LV2300 | -142d |
|  | 4636 | **RHD4-02-002-C061-(LV)-Low Voltage cables** |  | 2027-05-08 | 2027-05-24 |  |  |
| RHD4CZ5C061LV3100 |  | Excavation for Low Voltage Cables for Low Voltage Network - (RD-C-6 /1)-Z5-C061-LV | 3d | 2027-05-08 | 2027-05-10 | RHD4ENSDZ5APPLV160, RHD4CZ5C061LV2400 | -142d |
| RHD4CZ5C061LV3200 |  | Cable Laying of Low Voltage Cables for Low Voltage Network - (RD-C-6 /1)-Z5-C061-LV | 3d | 2027-05-11 | 2027-05-13 | RHD4CZ5C061LV3100, RHD4PRSHLDOSLV1100, RHD4ENMSLV2000, RHD4ENMSLV2010, RHD4PRSHLSTAGLV1100 | -142d |
| RHD4CZ5C061LV3300 |  | Warning tape and Backfill for Low Voltage Cables for Low Voltage Network - (RD-C-6 /1)-Z5-C061-LV | 3d | 2027-05-19 | 2027-05-22 | RHD4CZ5C061LV3200 | -142d |
| RHD4CZ5C061LV3400 |  | Testing of Low Voltage Cables for Low Voltage Network - (RD-C-6 /1)-Z5-C061-LV | 2d | 2027-05-23 | 2027-05-24 | RHD4CZ5C061LV3300 | -142d |
|  | 4637 | **RHD4-02-002-C061-(LV)-Low Voltage Distribution Pillars** |  | 2027-05-25 | 2027-05-31 |  |  |
| RHD4CZ5C061LV4100 |  | Leveling for Distribution Pillars for Low Voltage Network - (RD-C-6 /1)-Z5-C061-LV | 2d | 2027-05-25 | 2027-05-26 | RHD4CZ5C061LV3400 | -142d |
| RHD4CZ5C061LV4200 |  | Lean Concrete for Distribution Pillars for Low Voltage Network - (RD-C-6 /1)-Z5-C061-LV | 2d | 2027-05-27 | 2027-05-29 | RHD4CZ5C061LV4100 | -142d |
| RHD4CZ5C061LV4300 |  | Installation of Distribution Pillars for Low Voltage Network - (RD-C-6 /1)-Z5-C061-LV | 2d | 2027-05-30 | 2027-05-31 | RHD4CZ5C061LV4200, RHD4PRSHLDOSLV1200, RHD4PRSHLDOSLV1300, RHD4PRSHLSTAGLV1200, RHD4PRSHLSTAGLV1300 | -142d |
|  | 4638 | **RHD4-02-002-C061-(LV)-Low Voltage Distribution Pillars Earthing** |  |  |  |  |  |

| ID | WBS | Task | Duration | Start | Finish | Predecessors | Total float |
| --- | --- | --- | --- | --- | --- | --- | --- |
|  | 4639 | **RHD4-02-002-Z5-C061-Street Lighting Network - SL** |  | 2027-05-01 | 2027-06-28 |  |  |
|  | 4640 | **RHD4-02-002-C061-(SL)-Street Lighting duct banks** |  | 2027-05-01 | 2027-05-24 |  |  |
| RHD4CZ5C061SL2100 |  | Excavation of Duct Banks for Street Lighting Network - (RD-C-6 /1)-Z5-C061-SL | 4d | 2027-05-01 | 2027-05-04 | RHD4CZ5C061LV2100, RHD4ENSDZ5APPSL170 | -142d |
| RHD4CZ5C061SL2200 |  | Installation of Duct Banks for Street Lighting Network - (RD-C-6 /1)-Z5-C061-SL | 6d | 2027-05-05 | 2027-05-11 | RHD4CZ5C061SL2100, RHD4CZ5C061LV2200, RHD4PRSHLDOSSL1000, RHD4PRSHLSTAGSL1000 | -142d |
| RHD4CZ5C061SL2300 |  | Pouring of Duct Banks for Street Lighting Network - (RD-C-6 /1)-Z5-C061-SL | 4d | 2027-05-12 | 2027-05-20 | RHD4CZ5C061SL2200, RHD4CZ5C061LV2300 | -142d |
| RHD4CZ5C061SL2400 |  | Backfilling of Duct Banks for Street Lighting Network - (RD-C-6 /1)-Z5-C061-SL | 3d | 2027-05-22 | 2027-05-24 | RHD4CZ5C061SL2300, RHD4CZ5C061LV2400 | -142d |
|  | 4641 | **RHD4-02-002-C061-(SL)-Street Lighting Drawpit** |  | 2027-06-01 | 2027-06-05 |  |  |
| RHD4CZ5C061SL5100 |  | Excavation of Drawpit size 600x600x900mm for Street Lighting Network - (RD-C-6 /1)-Z5-C061-SL | 2d | 2027-06-01 | 2027-06-02 | RHD4CZ5C061SL2300, RHD4ENSDZ5APPSL170, RHD4CZ5C061LV4300 | -142d |
| RHD4CZ5C061SL5200 |  | Installation of Drawpit size 600x600x900mm for Street Lighting Network - (RD-C-6 /1)-Z5-C061-SL | 2d | 2027-06-03 | 2027-06-05 | RHD4CZ5C061SL5100, RHD4PRSHLDOSSL1400, RHD4PRSHLSTAGSL1400 | -142d |
|  | 4642 | **RHD4-02-002-C061-(SL)-Street Lighting cables** |  | 2027-06-06 | 2027-06-14 |  |  |
| RHD4CZ5C061SL3100 |  | Excavation for Street Lighting Cables for Street Lighting Network - (RD-C-6 /1)-Z5-C061-SL | 2d | 2027-06-06 | 2027-06-07 | RHD4ENSDZ5APPSL170, RHD4CZ5C061SL5200 | -142d |
| RHD4CZ5C061SL3200 |  | Cable Laying of Street Lighting Cables for Street Lighting Network - (RD-C-6 /1)-Z5-C061-SL | 2d | 2027-06-08 | 2027-06-09 | RHD4CZ5C061SL3100, RHD4PRSHLDOSSL1100, RHD4ENMSSL2000, RHD4ENMSSL2010, RHD4PRSHLSTAGSL1100 | -142d |
| RHD4CZ5C061SL3300 |  | Warning tape and Backfill for Street Lighting Cables for Street Lighting Network - (RD-C-6 /1)-Z5-C061-SL | 2d | 2027-06-10 | 2027-06-12 | RHD4CZ5C061SL3200 | -142d |
| RHD4CZ5C061SL3400 |  | Testing of Street Lighting Cables for Street Lighting Network - (RD-C-6 /1)-Z5-C061-SL | 2d | 2027-06-13 | 2027-06-14 | RHD4CZ5C061SL3300 | -142d |
|  | 4643 | **RHD4-02-002-C061-(SL)-Street Lighting Poles** |  | 2027-06-15 | 2027-06-26 |  |  |
| RHD4CZ5C061SL1100 |  | Excavation for RC Base for Lighting Poles for Street Lighting Network - (RD-C-6 /1)-Z5-C061-SL | 2d | 2027-06-15 | 2027-06-16 | RHD4ENSDZ5APPSL170, RHD4CZ5C061SL3400 | -142d |
| RHD4CZ5C061SL1200 |  | Installation for RC Base for Lighting Poles for Street Lighting Network - (RD-C-6 /1)-Z5-C061-SL | 2d | 2027-06-17 | 2027-06-19 | RHD4CZ5C061SL1100 | -142d |
| RHD4CZ5C061SL1300 |  | Backfill for RC Base for Lighting Poles for Street Lighting Network - (RD-C-6 /1)-Z5-C061-SL | 2d | 2027-06-20 | 2027-06-21 | RHD4CZ5C061SL1200 | -142d |
| RHD4CZ5C061SL1400 |  | Installation for Lighting Poles for Street Lighting Network - (RD-C-6 /1)-Z5-C061-SL | 2d | 2027-06-22 | 2027-06-23 | RHD4CZ5C061SL1300, RHD4PRSHLDOSSL1200, RHD4ENMSSL2000, RHD4ENMSSL2010, RHD4PRSHLSTAGSL1200 | -142d |
| RHD4CZ5C061SL1500 |  | Luminaire Installation for Lighting Poles for Street Lighting Network - (RD-C-6 /1)-Z5-C061-SL | 2d | 2027-06-24 | 2027-06-26 | RHD4CZ5C061SL1400, RHD4PRSHLDOSSL1300, RHD4PRSHLSTAGSL1300 | -142d |
|  | 4644 | **RHD4-02-002-C061-(SL)-Street Lighting Feeder Pillars** |  | 2027-06-13 | 2027-06-26 |  |  |
| RHD4CZ5C061SL4100 |  | Leveling for Distribution Pillars for Street Lighting Network - (RD-C-6 /1)-Z5-C061-SL | 2d | 2027-06-13 | 2027-06-14 | RHD4CZ5C061SL3300 | -136d |
| RHD4CZ5C061SL4200 |  | Lean Concrete for Distribution Pillars for Street Lighting Network - (RD-C-6 /1)-Z5-C061-SL | 2d | 2027-06-15 | 2027-06-16 | RHD4CZ5C061SL4100 | -136d |
| RHD4CZ5C061SL4300 |  | Installation of Distribution Pillars for Street Lighting Network - (RD-C-6 /1)-Z5-C061-SL | 2d | 2027-06-24 | 2027-06-26 | RHD4CZ5C061SL4200, RHD4CZ5C061SL1400 | -142d |
|  | 4645 | **RHD4-02-002-C061-(SL)-Street Lighting Earthing System** |  | 2027-06-27 | 2027-06-28 |  |  |
| RHD4CZ5C061SL6100 |  | Installation of Earthing for Lighting Poles and Fedder Pillers for Street Lighting Network - (RD-C-6 /1)-Z5-C061-SL | 2d | 2027-06-27 | 2027-06-28 | RHD4CZ5C061SL4300, RHD4ENMSER2000, RHD4ENMSER2010, RHD4CZ5C061SL1500 | -142d |
|  | 4651 | **RHD4-02-002-Z5-C061-Telecommunications Network - TC** |  | 2027-01-26 | 2027-07-14 |  |  |
|  | 4652 | **RHD4-02-002-C061-(TC)-Telecommunications Ducts** |  | 2027-06-29 | 2027-07-14 |  |  |
| RHD4CZ5C061TC2100 |  | Excavation of HDPE Ducts for Telecom Network - (RD-C-6 /1)-Z5-C061-TC | 4d | 2027-06-29 | 2027-07-03 | RHD4CZ5C061TC3400, RHD4ENSDZ5APPTC190, RHD4CZ5C061SL6100 | -142d |
| RHD4CZ5C061TC2200 |  | Installation of HDPE Ducts for Telecom Network - (RD-C-6 /1)-Z5-C061-TC | 6d | 2027-07-04 | 2027-07-10 | RHD4CZ5C061TC2100, RHD4PRSHLDOSTC1000, RHD4PRSHLSTAGTC1000 | -142d |
| RHD4CZ5C061TC2400 |  | Backfilling of HDPE Ducts for Telecom Network - (RD-C-6 /1)-Z5-C061-TC | 4d | 2027-07-11 | 2027-07-14 | RHD4CZ5C061TC2200, RHD4CZ5C061TC5200 | -141d |
|  | 4653 | **RHD4-02-002-C061-(TC)-Telecommunications Manholes** |  | 2027-07-04 | 2027-07-07 |  |  |
| RHD4CZ5C061TC5100 |  | Excavation for Manholes for Telecom Network - (RD-C-6 /1)-Z5-C061-TC | 2d | 2027-07-04 | 2027-07-05 | RHD4CZ5C061TC2100, RHD4ENSDZ5APPTC190 | -139d |
| RHD4CZ5C061TC5200 |  | Installation of Manholes for Telecom Network - (RD-C-6 /1)-Z5-C061-TC | 2d | 2027-07-06 | 2027-07-07 | RHD4CZ5C061TC5100, RHD4CZ5C061TC2200 SS, RHD4PRSHLDOSTC1200, RHD4PRSHLSTAGTC1200 | -139d |
|  | 4654 | **RHD4-02-002-C061-(TC)-Telecomminications Road Crossings** |  | 2027-01-26 | 2027-02-03 |  |  |
| RHD4CZ5C061TC3100 |  | Excavation for Road Crossings for Telecom Network - (RD-C-6 /1)-Z5-C061-TC | 2d | 2027-01-26 | 2027-01-27 | RHD4ENSDZ5APPTC190, RHD4CZ5C061ST3101 | -148d |
| RHD4CZ5C061TC3200 |  | Installation of Road Crossings for Telecom Network - (RD-C-6 /1)-Z5-C061-TC | 2d | 2027-01-28 | 2027-01-30 | RHD4CZ5C061TC3100, RHD4PRSHLDOSTC1100, RHD4PRSHLSTAGTC1100 | -148d |
| RHD4CZ5C061TC3300 |  | Pouring of Road Crossings for Telecom Network - (RD-C-6 /1)-Z5-C061-TC | 2d | 2027-01-31 | 2027-02-01 | RHD4CZ5C061TC3200, RHD4CZ5L07ST3502 | -148d |
| RHD4CZ5C061TC3400 |  | Backfilling of Road Crossings for Telecom Network - (RD-C-6 /1)-Z5-C061-TC | 2d | 2027-02-02 | 2027-02-03 | RHD4CZ5C061TC3300 | -148d |
|  | 4655 | **RHD4-02-002-Z5-C061-Information and Communication Technologies - ICT** |  | 2027-01-26 | 2027-08-30 |  |  |
|  | 4656 | **RHD4-02-002-C061-(ICT)-Information and Communication Technologies Ducts** |  | 2027-07-11 | 2027-08-30 |  |  |
| RHD4CZ5C061ICT2100 |  | Excavation of HDPE Ducts for ICT Network - (RD-C-6 /1)-Z5-C061-ICT | 4d | 2027-07-11 | 2027-07-14 | RHD4ENSDZ5APPICT200, RHD4CZ5C061TC2200 | -142d |
| RHD4CZ5C061ICT2200 |  | Installation of HDPE Ducts for ICT Network - (RD-C-6 /1)-Z5-C061-ICT | 6d | 2027-07-15 | 2027-07-21 | RHD4CZ5C061ICT2100, RHD4PRSHLDOSICT1000, RHD4PRSHLSTAGICT1000 | -142d |
| RHD4CZ5C061ICT2400 |  | Backfilling of HDPE Ducts for ICT Network - (RD-C-6 /1)-Z5-C061-ICT | 4d | 2027-08-26 | 2027-08-30 | RHD4CZ5C061ICT2200, RHD4CZ5C061ICT5200, RHD4CZ5C061MV5400, RHD4CZ5C061MV3400, RHD4CZ5C061MV3401 | -172d |
|  | 4657 | **RHD4-02-002-C061-(ICT)-Information and Communication Technologies Manholes** |  | 2027-07-15 | 2027-07-21 |  |  |
| RHD4CZ5C061ICT5100 |  | Excavation for Manholes for ICT Network - (RD-C-6 /1)-Z5-C061-ICT | 3d | 2027-07-15 | 2027-07-18 | RHD4CZ5C061ICT2100, RHD4ENSDZ5APPICT200 | -142d |
| RHD4CZ5C061ICT5200 |  | Installation of Manholes for ICT Network - (RD-C-6 /1)-Z5-C061-ICT | 3d | 2027-07-19 | 2027-07-21 | RHD4CZ5C061ICT5100, RHD4PRSHLDOSICT1200, RHD4PRSHLSTAGICT1200 | -142d |
|  | 4658 | **RHD4-02-002-C061-(ICT)-Information and Communication Technologies Road Crossings** |  | 2027-01-26 | 2027-02-20 |  |  |
| RHD4CZ5C061ICT3100 |  | Excavation for Road Crossings for ICT Network - (RD-C-6 /1)-Z5-C061-ICT | 2d | 2027-01-26 | 2027-01-27 | RHD4ENSDZ5APPICT200, RHD4CZ5C061ST3101 | -148d |
| RHD4CZ5C061ICT3200 |  | Installation of Road Crossings for ICT Network - (RD-C-6 /1)-Z5-C061-ICT | 2d | 2027-02-14 | 2027-02-15 | RHD4CZ5C061ICT3100, RHD4PRSHLDOSICT1100, RHD4PRSHLSTAGICT1100 | -162d |
| RHD4CZ5C061ICT3300 |  | Pouring of Road Crossings for ICT Network - (RD-C-6 /1)-Z5-C061-ICT | 2d | 2027-02-16 | 2027-02-17 | RHD4CZ5C061ICT3200 | -162d |
| RHD4CZ5C061ICT3400 |  | Backfilling of Road Crossings for ICT Network - (RD-C-6 /1)-Z5-C061-ICT | 2d | 2027-02-18 | 2027-02-20 | RHD4CZ5C061ICT3300, RHD4CZ5C061ST2500 | -162d |
|  | 4646 | **RHD4-02-002-Z5-C061-Landscape Network - LS** |  |  |  |  |  |
|  | 4647 | **RHD4-02-002-C061-(LS)-Landscape Lighting cables** |  |  |  |  |  |
|  | 4648 | **RHD4-02-002-C061-(LS)-Landscape Feeder Pillars** |  |  |  |  |  |
|  | 4649 | **RHD4-02-002-C061-(LS)-Landscape Bollard Poles** |  |  |  |  |  |
|  | 4650 | **RHD4-02-002-C061-(LS)-Landscape Feeder Pillars Earthing** |  |  |  |  |  |
|  | 4659 | **RHD4-02-002-Z5-C061-Security Network - CCTV** |  | 2027-08-31 | 2027-10-07 |  |  |
|  | 4660 | **RHD4-02-002-C061-(CCTV)-Civil Works** |  | 2027-08-31 | 2027-09-11 |  |  |
| RHD4CZ5C061CCTV2100 |  | Civil Works for Security Network - (RD-C-6 /1)-Z5-C061-CCTV | 10d | 2027-08-31 | 2027-09-11 | RHD4CZ5C061ICT2400 | -172d |
|  | 4661 | **RHD4-02-002-C061-(CCTV)-CCTV Poles** |  | 2027-09-12 | 2027-09-22 |  |  |
| RHD4CZ5C061CCTV1100 |  | Excavation for RC Base for CCTV Poles for Security Network - (RD-C-6 /1)-Z5-C061-CCTV | 2d | 2027-09-12 | 2027-09-13 | RHD4CZ5C061CCTV2100, RHD4ENSDZ5APPCCTV210 | -172d |
| RHD4CZ5C061CCTV1200 |  | Installation for RC Base for CCTV Poles for Security Network - (RD-C-6 /1)-Z5-C061-CCTV | 2d | 2027-09-14 | 2027-09-15 | RHD4CZ5C061CCTV1100 | -172d |
| RHD4CZ5C061CCTV1300 |  | Backfill for RC Base for CCTV Poles for Security Network - (RD-C-6 /1)-Z5-C061-CCTV | 2d | 2027-09-16 | 2027-09-18 | RHD4CZ5C061CCTV1200 | -172d |
| RHD4CZ5C061CCTV1400 |  | Installation for CCTV Poles for Security Network - (RD-C-6 /1)-Z5-C061-CCTV | 2d | 2027-09-19 | 2027-09-20 | RHD4CZ5C061CCTV1300, RHD4PRSHLDOSCCTV1000, RHD4PRSHLSTACCTV1000 | -172d |
| RHD4CZ5C061CCTV1500 |  | Protection post Installation for CCTV Poles for Security Network - (RD-C-6 /1)-Z5-C061-CCTV | 2d | 2027-09-21 | 2027-09-22 | RHD4CZ5C061CCTV1400 | -172d |
|  | 4662 | **RHD4-02-002-C061-(CCTV)-Camera** |  | 2027-09-25 | 2027-09-26 |  |  |
| RHD4CZ5C061CCTV3100 |  | Installation for Cameras for Security Network - (RD-C-6 /1)-Z5-C061-CCTV | 2d | 2027-09-25 | 2027-09-26 | RHD4CZ5C061CCTV1400, RHD4CZ5C061CCTV4100, RHD4PRSHLDOSCCTV1100, RHD4PRSHLSTACCTV1100, RHD4CZ5C061CCTV1500 | -172d |
|  | 4663 | **RHD4-02-002-C061-(CCTV)-Power and Infrastructure** |  | 2027-09-21 | 2027-09-26 |  |  |
| RHD4CZ5C061CCTV4100 |  | Installation of Power outlet, UPS and midspan for PTZ Camerafor Cameras for Security Network - (RD-C-6 /1)-Z5-C061-CCTV | 2d | 2027-09-21 | 2027-09-22 | RHD4CZ5C061CCTV1400, RHD4PRSHLDOSCCTV1300, RHD4PRSHLSTACCTV1300 | -172d |

| ID | WBS | Task | Duration | Start | Finish | Predecessors | Complete | Total float |
| --- | --- | --- | --- | --- | --- | --- | --- | --- |
| RHD4CZ5C061CCTV4200 |  | Short Range Wireless PoP wireless Bridgefor CCTV Poles for Security Network - (RD-C-6 /1)-Z5-C061-CCTV | 2d | 2027-09-25 | 2027-09-26 | RHD4CZ5C061CCTV4100 |  | -172d |
|  | 4665 | **RHD4-02-002-C061-(CCTV)-CCTV Panels and Components** |  | 2027-09-27 | 2027-10-07 |  |  |  |
| RHD4CZ5C061CCTV6100 |  | Installation for CCTV Panels for Security Network - (RD-C-6 /1)-Z5-C061-CCTV | 10d | 2027-09-27 | 2027-10-07 | RHD4CZ5C061CCTV4200, RHD4CZ5C061CCTV3100, RHD4PRSHLDOSCCTV1200, RHD4PRSHLSTACCTV1200, RHD4PRLOLSTACCTV1001 |  | -172d |
|  | 4298 | **RHD4-02-002-Z5-L08** |  | 2026-05-20 | 2028-02-03 |  |  |  |
|  | 4329 | **RHD4-02-002-Z5-L08-Crossings Sewage Network - SWCr** |  |  |  |  |  |  |
|  | 4339 | **RHD4-02-002-L08-(SWCr)-MH Works - 1200 mm diameter** |  |  |  |  |  |  |
|  | 4340 | **RHD4-02-002-L08-(SWCr)-MH Works - 1200 mm diameter with Back drop** |  |  |  |  |  |  |
|  | 4330 | **RHD4-02-002-L08-(SWCr)-GRP Pipes - 300 mm diameter** |  |  |  |  |  |  |
|  | 4335 | **RHD4-02-002-L08-(SWCr)-UPVC Pipes - 200 mm diameter** |  |  |  |  |  |  |
|  | 4336 | **RHD4-02-002-L08-(SWCr)-HDPE Pipes - 250 mm diameter** |  |  |  |  |  |  |
|  | 4373 | **RHD4-02-002-Z5-L08-Crossings Potable Network - PTCr** |  |  |  |  |  |  |
|  | 4375 | **RHD4-02-002-L08-(PTCr)-HDPE Pipes - 160 mm diameter** |  |  |  |  |  |  |
|  | 4374 | **RHD4-02-002-L08-(PTCr)-HDPE Pipes - 110 mm diameter** |  |  |  |  |  |  |
|  | 4379 | **RHD4-02-002-L08-(PTCr)-Gate Valves (Direct Buried)** |  |  |  |  |  |  |
|  | 4420 | **RHD4-02-002-Z5-L08-Crossings Irrigation Network - IRRC** |  |  |  |  |  |  |
|  | 4421 | **RHD4-02-002-L08-(IRRC)-HDPE Pipes - 160 mm diameter** |  |  |  |  |  |  |
|  | 4429 | **RHD4-02-002-L08-(IRRC)-Gate Valves (Direct Buried)** |  |  |  |  |  |  |
|  | 4477 | **RHD4-02-002-Z5-L08-Road Works - RD** |  | 2026-05-20 | 2028-02-03 |  |  |  |
|  | 4478 | **RHD4-02-002-L08-(RD)-Subgrade** |  | 2026-05-20 | 2026-08-03 |  |  |  |
| RHD4CZ5L08RD1100 |  | Supply, lay and compaction subgrade compacted thickness 300 mm for Roads - (RD-L-8)-Z5-L08-RD(Completed) | 4d | 2026-05-20 A | 2026-08-03 A | RHD4ENSDZ5APPRD220, RHD4ENSDZ5APPEW100 SS, RHD4CZ5L08ST3302, RHD4CZ5L08ST3300, RHD4CZ5L08ST1509, RHD4CZ5L08TC3400 | 100% |  |
|  | 4479 | **RHD4-02-002-L08-(RD)-Aggregate Base Course** |  | 2027-02-10 | 2027-02-17 |  |  |  |
| RHD4CZ5L08RD2100 |  | Supply, lay and compaction Aggregate base course compacted thickness 300 mmfor Roads - (RD-L-8)-Z5-L08-RD | 7d | 2027-02-10 | 2027-02-17 | RHD4PRSHLDOSRD1000, RHD4PRSHLSTAGRD1000, RHD4ENSDZ5APPRD220, RHD4ENSDZ5APPEW100 SS, RHD4CZ5L08RD1100 |  | -152d |
|  | 4480 | **RHD4-02-002-L08-(RD)-Bituminous base course Two Layers, including (MC1)&(RC2)** |  | 2027-02-18 | 2027-11-13 |  |  |  |
| RHD4CZ5L08RD3100 |  | Supply, lay and Asphaltic base course including Prime Coat (MC1) for 1st Layer - (RD-L-8)-Z5-L08-RD | 2d | 2027-02-18 | 2027-02-20 | RHD4CZ5L08RD2100, RHD4PRSHLDOSRD1100, RHD4ENMSASPH2000, RHD4ENMSASPH2010, RHD4PRSHLSTAGRD1100 |  | -152d |
| RHD4CZ5L08RD3200 |  | Supply, lay and Asphaltic base course including Tack Coat (RC2) for 2nd Layer - (RD-L-8)-Z5-L08-RD | 2d | 2027-11-10 | 2027-11-13 | RHD4PRSHLDOSRD1100, RHD4PRSHLSTAGRD1100, RHD4CZ5L08ICT2400 |  | -138.02d |
|  | 4482 | **RHD4-02-002-L08-(RD)-Precast Concrete Curb** |  | 2027-11-13 | 2027-11-21 |  |  |  |
| RHD4CZ5L08RD5100 |  | Supply and installation Precast Concrete Kerb for Roads - (RD-L-8)-Z5-L08-RD | 7d | 2027-11-13 | 2027-11-21 | RHD4CZ5L08RD3200, RHD4PRSHLDOSRD1200, RHD4ENMSRD2000, RHD4ENMSRD2010, RHD4PRSHLSTAGRD1200 |  | -138.02d |
|  | 4485 | **RHD4-02-002-L08-(RD)-Traffic Signage** |  | 2027-11-21 | 2027-11-29 |  |  |  |
| RHD4CZ5L08RD8100 |  | Installation of Traffic Signage for Road Network - (RD-L-8)-Z5-L08-RD | 7d | 2027-11-21 | 2027-11-29 | RHD4CZ5L08RD5100, RHD4PRSHLDOSRD1600, RHD4PRSHLSTAGRD1600 |  | -138.02d |
|  | 4483 | **RHD4-02-002-L08-(RD)-Precast Interlocking Block Pavers** |  | 2027-11-29 | 2027-12-09 |  |  |  |
| RHD4CZ5L08RD6100 |  | Interlocking block pavers for sidewalk-footpath for Side walks and Parking areas - (RD-L-8)-Z5-L08-RD | 9d | 2027-11-29 | 2027-12-09 | RHD4CZ5L08RD8100, RHD4PRSHLDOSRD1300, RHD4ENMSRD2000, RHD4ENMSRD2010, RHD4PRSHLSTAGRD1300 |  | -122.02d |
|  | 4481 | **RHD4-02-002-L08-(RD)-Bituminous concrete wearing course including tack coat (RC2)** |  | 2027-12-09 | 2027-12-12 |  |  |  |
| RHD4CZ5L08RD4100 |  | Supply, lay and compaction Asphaltic wearing course including tack Coat (RC2)for Road Network - (RD-L-8)-Z5-L08-RD | 2d | 2027-12-09 | 2027-12-12 | RHD4CZ5L08RD5100, RHD4CZ5L08RD6100 |  | -122.02d |
|  | 4484 | **RHD4-02-002-L08-(RD)-Pavement Marking** |  | 2028-01-31 | 2028-02-03 |  |  |  |
| RHD4CZ5L08RD7100 |  | Pavement Markings for Road Network - (RD-L-8)-Z5-L08-RD | 3d | 2028-01-31 | 2028-02-03 | RHD4PRSHLDOSRD1500, RHD4PRSHLSTAGRD1500, RHD4CZ6C062RD7100 |  | -190.02d |
|  | 4302 | **RHD4-02-002-Z5-L08-Storm Network - ST** |  | 2026-08-04 | 2027-02-27 |  |  |  |
|  | 4321 | **RHD4-02-002-L08-(ST)-MH Works - 2000 mm diameter** |  | 2026-08-04 | 2027-02-14 |  |  |  |
| RHD4CZ5L08ST3102 |  | Excavation and PC Blinding works for MH 2000 mm - (RD-L-8)-Z5-L08-ST | 3d | 2026-08-04 A | 2027-01-28 | RHD4ENSDZ5APPST110, RHD4ENMSST2000, RHD4CZ5C051ST3101 | 71% | -193d |
| RHD4CZ5L08ST3202 |  | Installation of Base for MH 2000 mm - (RD-L-8)-Z5-L08-ST | 4d | 2026-10-27 A | 2027-02-02 | RHD4CZ5L08ST3102, RHD4PRSHLSTAGST1604 |  | -193d |
| RHD4CZ5L08ST3302 |  | MH Ring and C.Slab works and Backfilling works for MH 2000 mm - (RD-L-8)-Z5-L08-ST | 4d | 2027-02-03 | 2027-02-07 | RHD4CZ5L08ST3202, RHD4PRSHLDOSST1604 |  | -193d |
| RHD4CZ5L08ST3402 |  | Steel Cover for MH 2000 mm - (RD-L-8)-Z5-L08-ST | 3d | 2027-02-08 | 2027-02-10 | RHD4PRSHLDOSST1704, RHD4PRSHLSTAGST1704, RHD4CZ5L08ST3302 |  | -193d |
| RHD4CZ5L08ST3502 |  | Finishing, Benching, Testing works for MH 2000 mm - (RD-L-8)-Z5-L08-ST | 3d | 2027-02-11 | 2027-02-14 | RHD4CZ5L08ST3402 |  | -193d |
|  | 4319 | **RHD4-02-002-L08-(ST)-MH Works - 1200 mm diameter** |  | 2026-08-04 | 2027-02-15 |  |  |  |
| RHD4CZ5L08ST3100 |  | Excavation and PC Blinding works for MH 1200 mm - (RD-L-8)-Z5-L08-ST | 2d | 2026-08-04 A | 2026-08-06 A | RHD4CZ5L08ST3102, RHD4ENSDZ5APPST110, RHD4ENMSST2000, RHD4ENMSST2010 | 100% |  |
| RHD4CZ5L08ST3200 |  | Installation of Base for MH 1200 mm - (RD-L-8)-Z5-L08-ST | 2d | 2026-10-18 A | 2027-01-31 | RHD4CZ5L08ST3100, RHD4PRSHLSTAGST1604 | 50% | -186d |
| RHD4CZ5L08ST3300 |  | MH Ring and C.Slab works and Backfilling works for MH 1200 mm - (RD-L-8)-Z5-L08-ST | 2d | 2027-02-01 | 2027-02-02 | RHD4CZ5L08ST3200, RHD4PRSHLDOSST1604 |  | -186d |
| RHD4CZ5L08ST3400 |  | Steel Cover for MH 1200 mm - (RD-L-8)-Z5-L08-ST | 2d | 2027-02-11 | 2027-02-13 | RHD4CZ5L08ST3300, RHD4PRSHLDOSST1704, RHD4PRSHLSTAGST1704, RHD4CZ5L08ST3402 |  | -188d |
| RHD4CZ5L08ST3500 |  | Finishing, Benching, Testing works for MH 1200 mm - (RD-L-8)-Z5-L08-ST | 2d | 2027-02-14 | 2027-02-15 | RHD4CZ5L08ST3400 |  | -188d |
|  | 4316 | **RHD4-02-002-L08-(ST)-GRP Pipes - 1800 mm diameter** |  |  |  |  |  |  |
|  | 6393 | **RHD4-02-002-L08-(ST)-GRP Pipes - 1300 mm diameter** |  | 2026-08-04 | 2027-02-09 |  |  |  |
| RHD4CZ5L08ST1109 |  | Excavation works for GRP Pipe Line 1300 mm - (RD-L-8)-Z5-L08-ST | 2d | 2026-08-04 A | 2027-01-31 | RHD4CZ5L08ST3100 | 64% | -171d |
| RHD4CZ5L08ST1209 |  | Bedding works for GRP Pipe Line 1300 mm - (RD-L-8)-Z5-L08-ST | 2d | 2026-08-06 A | 2027-02-02 | RHD4CZ5L08ST1109 | 64% | -171d |
| RHD4CZ5L08ST1309 |  | Installing for GRP Pipe Line 1300 mm - (RD-L-8)-Z5-L08-ST | 2d | 2026-08-08 A | 2027-02-04 | RHD4CZ5L08ST1209 | 64% | -171d |
| RHD4CZ5L08ST1509 |  | Backfilling and warning tape works for GRP Pipe Line 1300 mm - (RD-L-8)-Z5-L08-ST | 2d | 2026-08-10 A | 2027-02-09 | RHD4CZ5L08ST1409 | 64% | -171d |
| RHD4CZ5L08ST1409 |  | Primary Test for GRP Pipe Line 1300 mm - (RD-L-8)-Z5-L08-ST | 2d | 2027-02-06 | 2027-02-07 | RHD4CZ5L08ST1309 |  | -171d |
|  | 2414 | **RHD4-02-002-L08-(ST)-GRP Pipes - 600 mm diameter** |  | 2026-10-13 | 2027-01-31 |  |  |  |
| RHD4CZ5L08ST1102 |  | Excavation works for GRP Pipe Line 600 mm - (RD-L-8)-Z5-L08-ST | 2d | 2026-10-13 A | 2026-10-14 A | RHD4CZ5L08ST3100 | 100% |  |
| RHD4CZ5L08ST1202 |  | Bedding works for GRP Pipe Line 600 mm - (RD-L-8)-Z5-L08-ST | 2d | 2026-10-15 A | 2026-10-17 A | RHD4CZ5L08ST1102 | 100% |  |
| RHD4CZ5L08ST1302 |  | Installing for GRP Pipe Line 600 mm - (RD-L-8)-Z5-L08-ST | 2d | 2026-10-18 A | 2026-10-19 A | RHD4CZ5L08ST1202 | 100% |  |
| RHD4CZ5L08ST1502 |  | Backfilling and warning tape works for GRP Pipe Line 600 mm - (RD-L-8)-Z5-L08-ST | 2d | 2026-10-20 A | 2026-10-21 A | RHD4CZ5L08ST1402 | 100% |  |
| RHD4CZ5L08ST1402 |  | Primary Test for GRP Pipe Line 600 mm - (RD-L-8)-Z5-L08-ST | 2d | 2027-01-30 | 2027-01-31 | RHD4CZ5L08ST1302 |  | -158d |
|  | 4304 | **RHD4-02-002-L08-(ST)-GRP Pipes - 500 mm diameter** |  | 2026-08-04 | 2027-01-31 |  |  |  |
| RHD4CZ5L08ST1101 |  | Excavation works for GRP Pipe Line 500 mm - (RD-L-8)-Z5-L08-ST | 2d | 2026-08-04 A | 2026-08-05 A | RHD4ENSDZ5APPST110, RHD4CZ5L08ST1102 | 100% |  |
| RHD4CZ5L08ST1201 |  | Bedding works for GRP Pipe Line 500 mm - (RD-L-8)-Z5-L08-ST | 2d | 2026-08-06 A | 2026-08-08 A | RHD4CZ5L08ST1101 | 100% |  |
| RHD4CZ5L08ST1301 |  | Installing for GRP Pipe Line 500 mm - (RD-L-8)-Z5-L08-ST | 2d | 2026-08-09 A | 2026-08-10 A | RHD4CZ5L08ST1201, RHD4PRSHLSTAGST1004, RHD4PRSHLDOSST1604, RHD4PRSHLPOST1000, RHD4PRSHLDOSST1004 | 100% |  |
| RHD4CZ5L08ST1501 |  | Backfilling and warning tape works for GRP Pipe Line 500 mm - (RD-L-8)-Z5-L08-ST | 2d | 2026-09-19 A | 2026-09-20 A | RHD4CZ5L08ST1401 | 100% |  |
| RHD4CZ5L08ST1401 |  | Primary Test for GRP Pipe Line 500 mm - (RD-L-8)-Z5-L08-ST | 2d | 2027-01-30 | 2027-01-31 | RHD4CZ5L08ST1301 |  | -158d |
|  | 4303 | **RHD4-02-002-L08-(ST)-GRP Pipes - 400 mm diameter** |  | 2026-09-19 | 2027-01-31 |  |  |  |
| RHD4CZ5L08ST1100 |  | Excavation works for GRP Pipe Line 400 mm - (RD-L-8)-Z5-L08-ST | 2d | 2026-09-19 A | 2026-09-20 A | RHD4CZ5L08ST1101, RHD4ENSDZ5APPST110 | 100% |  |
| RHD4CZ5L08ST1200 |  | Bedding works for GRP Pipe Line 400 mm - (RD-L-8)-Z5-L08-ST | 2d | 2026-09-20 A | 2026-09-21 A | RHD4CZ5L08ST1100 | 100% |  |

| ID | WBS | Task | Duration | Start | Finish | Predecessors | Complete | Total float |
| --- | --- | --- | --- | --- | --- | --- | --- | --- |
| RHD4CZ5L08ST1300 |  | Installing for GRP Pipe Line 400 mm - (RD-L-8)-Z5-L08-ST | 2d | 2026-09-21 A | 2026-09-22 A | RHD4CZ5L08ST1200, RHD4CZ5L08ST1301, RHD4PRSHLSTAGST1004, RHD4PRSHLDOSST1604, RHD4PRSHLPOST1000, RHD4PRSHLDOSST1004 | 100% |  |
| RHD4CZ5L08ST1500 |  | Backfilling and warning tape works for GRP Pipe Line 400 mm - (RD-L-8)-Z5-L08-ST | 2d | 2026-09-22 A | 2026-09-24 A | RHD4CZ5L08ST1400, RHD4CZ5L08ST1501 | 100% |  |
| RHD4CZ5L08ST1400 |  | Primary Test for GRP Pipe Line 400 mm - (RD-L-8)-Z5-L08-ST | 2d | 2027-01-30 | 2027-01-31 | RHD4CZ5L08ST1300 |  | -158d |
|  | 4317 | **RHD4-02-002-L08-(ST)-UPVC Pipes - 300 mm diameter** |  | 2026-08-04 | 2027-02-27 |  |  |  |
| RHD4CZ5L08ST2100 |  | Excavation works for UPVC Pipe Line 300 mm - (RD-L-8)-Z5-L08-ST | 2d | 2026-08-04 A | 2027-02-15 | RHD4CZ5L08ST3300, RHD4CZ5L08ST3202, RHD4CZ5L08ST7300, RHD4CZ5L08ST3302, RHD4ENSDZ5APPST110 | 92% | -177d |
| RHD4CZ5L08ST2300 |  | Installing for UPVC Pipe Line 300 mm - (RD-L-8)-Z5-L08-ST | 2d | 2026-08-08 A | 2027-02-20 | RHD4CZ5L08ST2200, RHD4PRSHLDOSST1104, RHD4PRSHLSTAGST1104 | 92% | -177d |
| RHD4CZ5L08ST2200 |  | Bedding works for UPVC Pipe Line 300 mm - (RD-L-8)-Z5-L08-ST | 2d | 2026-09-06 A | 2027-02-17 | RHD4CZ5L08ST2100 | 92% | -177d |
| RHD4CZ5L08ST2400 |  | Primary Test for UPVC Pipe Line 300 mm - (RD-L-8)-Z5-L08-ST | 2d | 2027-02-21 | 2027-02-23 | RHD4CZ5L08ST2300 |  | -177d |
| RHD4CZ5L08ST2500 |  | Backfilling and warning tape works for UPVC Pipe Line 300 mm - (RD-L-8)-Z5-L08-ST | 3d | 2027-02-24 | 2027-02-27 | RHD4CZ5L08ST2400, RHD4CZ5L08ST6100, RHD4CZ5L08ST1500, RHD4CZ5L08ST1509, RHD4CZ5L08ST1502 |  | -177d |
|  | 4325 | **RHD4-02-002-L08-(ST)-Concrete Encasement** |  | 2027-02-18 | 2027-02-20 |  |  |  |
| RHD4CZ5L08ST6100 |  | Pipe Encasement for Storm Pipelines - (RD-L-8)-Z5-L08-ST | 2d | 2027-02-18 | 2027-02-20 | RHD4CZ5L08ST2300 SS, RHD4CZ5L08ST2300 FF, RHD4CZ5L08ST2200, RHD4CZ5L08ST3500 |  | -175d |
|  | 4326 | **RHD4-02-002-Z5-L08-Catch Basin - ST** |  | 2026-08-04 | 2027-02-23 |  |  |  |
|  | 4327 | **RHD4-02-002-L08-(ST)-Single Catch Basin Works** |  | 2026-08-04 | 2027-02-23 |  |  |  |
| RHD4CZ5L08ST7100 |  | Excavation works for Single Catch Basin - (RD-L-8)-Z5-L08-ST | 3d | 2026-08-04 A | 2027-02-06 | RHD4CZ5L08ST3300, RHD4ENSDZ5APPST110 | 88% | -186d |
| RHD4CZ5L08ST7200 |  | PC Blinding, Installation and Pipe connection for Single Catch Basin - (RD-L-8)-Z5-L08-ST | 3d | 2026-08-06 A | 2027-02-09 | RHD4CZ5L08ST7100 | 88% | -186d |
| RHD4CZ5L08ST7300 |  | Rings & C.Slab & Final Backfill for Single Catch Basin - (RD-L-8)-Z5-L08-ST | 3d | 2026-10-28 A | 2027-02-13 | RHD4CZ5L08ST7200, RHD4PRSHLDOSST1304, RHD4PRSHLSTAGST1304 |  | -186d |
| RHD4CZ5L08ST7400 |  | Steel Cover for Single Catch Basin - (RD-L-8)-Z5-L08-ST | 3d | 2027-02-14 | 2027-02-16 | RHD4CZ5L08ST7300, RHD4PRSHLDOSST1704 |  | -186d |
| RHD4CZ5L08ST7500 |  | Finishing and Insulation works for Single Catch Basin - (RD-L-8)-Z5-L08-ST | 5d | 2027-02-17 | 2027-02-23 | RHD4CZ5L08ST7400 |  | -186d |
|  | 4299 | **RHD4-02-002-Z5-L08-Concrete Box Culvert - ST** |  | 2026-06-11 | 2027-03-21 |  |  |  |
|  | 4300 | **RHD4-02-002-L08-(ST)-Concrete Box Culvert** |  | 2026-06-11 | 2027-03-21 |  |  |  |
| RHD4CZ5L08ST4100 |  | Excavation works for Box Culvert - (RD-L-8)-Z5-L08-ST(Completed) | 46d | 2026-06-11 A | 2026-06-13 A | RHD4ENSDZ5APPST110, RHD4CZ5L08ST3102, RHD4CZ7RA05RA3000 | 100% |  |
| RHD4CZ5L08ST4200 |  | PC works for Box Culvert - (RD-L-8)-Z5-L08-ST(Completed) | 43d | 2026-06-15 A | 2026-06-16 A | RHD4CZ5L08ST4100 SS | 100% |  |
| RHD4CZ5L08ST4400 |  | Raft works for Box Culvert - (RD-L-8)-Z5-L08-ST(Completed) | 21d | 2026-07-11 A | 2026-07-16 A | RHD4CZ5L08ST4200 SS | 100% |  |
| RHD4CZ5L08ST4500 |  | Wall and slab works for Box Culvert - (RD-L-8)-Z5-L08-ST | 2d | 2026-08-04 A | 2026-09-21 A | RHD4CZ5L08ST4400, RHD4CZ5L08ST4200, RHD4ENMSBC2000, RHD4ENMSBC2010, RHD4ENSDZ5APPST110, RHD4CZ5L08ST4100, RHD4CZ1C081ST3500, RHD4CZ2C082ST8500, RHD4CZ6C052SW3500, RHD4CZ9L05MV3300 | 100% |  |
| RHD4CZ5L08ST4600 |  | Insulation and Testing for Box Culvert - (RD-L-8)-Z5-L08-ST | 2d | 2026-10-20 A | 2026-10-22 A | RHD4CZ5L08ST4700, RHD4CZ5L08ST5400 | 100% |  |
| RHD4CZ5L08ST4700 |  | Backfilling works for Box Culvert - (RD-L-8)-Z5-L08-ST | 3d | 2026-10-23 A | 2027-03-21 | RHD4CZ5L08ST4500, RHD4CZ5L08ST5300 |  | -161d |
|  | 4301 | **RHD4-02-002-L08-(ST)-Concrete Chambers** |  | 2026-08-20 | 2027-03-21 |  |  |  |
| RHD4CZ5L08ST5100 |  | Excavation and Bedding for Concrete Chambers - for Box Culvert - (RD-L-8)-Z5-L08-ST | 3d | 2026-08-20 A | 2027-03-07 | RHD4CZ5L08ST4500, RHD4ENSDZ5APPST110, RHD4CZ5L08RD3100 | 50% | -161d |
| RHD4CZ5L08ST5200 |  | PC works for Concrete Chambers - for Box Culvert - (RD-L-8)-Z5-L08-ST | 3d | 2026-08-25 A | 2027-03-14 | RHD4CZ5L08ST5100, RHD4CZ5L08ST7500 | 50% | -161d |
| RHD4CZ5L08ST5300 |  | Installation for Concrete Chambers - for Box Culvert - (RD-L-8)-Z5-L08-ST | 3d | 2026-08-30 A | 2027-03-17 | RHD4CZ5L08ST5200 | 50% | -161d |
| RHD4CZ5L08ST5400 |  | Backfilling works for Concrete Chambers - for Box Culvert - (RD-L-8)-Z5-L08-ST | 3d | 2027-03-18 | 2027-03-21 | RHD4CZ5L08ST5300 |  | -161d |
|  | 4351 | **RHD4-02-002-Z5-L08-Sewage Network - SW** |  | 2026-08-09 | 2027-05-19 |  |  |  |
|  | 957 | **RHD4-02-002-L08-(SW)-MH Works - 1200 mm diameter with Back drop** |  | 2026-08-11 | 2027-04-14 |  |  |  |
| RHD4CZ5L08SW3101 |  | Excavation and PC Blinding works for MH 1200 mm - (RD-L-8)-Z5-L08-SW | 4d | 2026-08-11 A | 2026-08-12 A | RHD4CZ5L08SW3100 SS, RHD4CZ5L08ST2500 | 100% |  |
| RHD4CZ5L08SW3201 |  | Installation of Base for MH 1200 mm - (RD-L-8)-Z5-L08-SW | 6d | 2026-09-20 A | 2027-03-28 | RHD4CZ5L08SW3101 | 40% | -148d |
| RHD4CZ5L08SW3301 |  | MH Ring and C.Slab works and Backfilling works for MH 1200 mm - (RD-L-8)-Z5-L08-SW | 6d | 2027-03-29 | 2027-04-04 | RHD4CZ5L08SW3201 |  | -148d |
| RHD4CZ5L08SW3401 |  | Steel Cover for MH 1200 mm - (RD-L-8)-Z5-L08-SW | 3d | 2027-04-05 | 2027-04-07 | RHD4CZ5L08SW3301 |  | -148d |
| RHD4CZ5L08SW3501 |  | Finishing, Benching, Testing works for MH 1200 mm - (RD-L-8)-Z5-L08-SW | 6d | 2027-04-08 | 2027-04-14 | RHD4CZ5L08SW3401 |  | -148d |
|  | 4361 | **RHD4-02-002-L08-(SW)-MH Works - 1200 mm diameter** |  | 2026-08-11 | 2027-05-06 |  |  |  |
| RHD4CZ5L08SW3100 |  | Excavation and PC Blinding works for MH 1200 mm - (RD-L-8)-Z5-L08-SW | 7d | 2026-08-11 A | 2027-03-24 | RHD4ENSDZ5APPSW120, RHD4CZ5L08ST4600, RHD4CZ5L08ST1102 | 75% | -161d |
| RHD4CZ5L08SW3200 |  | Installation of Base for MH 1200 mm - (RD-L-8)-Z5-L08-SW | 10d | 2026-08-12 A | 2027-03-30 | RHD4CZ5L08SW3100 | 75% | -161d |
| RHD4CZ5L08SW3300 |  | MH Ring and C.Slab works and Backfilling works for MH 1200 mm - (RD-L-8)-Z5-L08-SW | 10d | 2027-04-07 | 2027-04-19 | RHD4CZ5L08SW3200, RHD4CZ8A011ST1201, RHD4CZ5L07SL2400 |  | -167.02d |
| RHD4CZ5L08SW3400 |  | Steel Cover for MH 1200 mm - (RD-L-8)-Z5-L08-SW | 5d | 2027-04-19 | 2027-04-25 | RHD4CZ5L08SW3300 |  | -152.02d |
| RHD4CZ5L08SW3500 |  | Finishing, Benching, Testing works for MH 1200 mm - (RD-L-8)-Z5-L08-SW | 10d | 2027-04-25 | 2027-05-06 | RHD4CZ5L08SW3400 |  | -152.02d |
|  | 4352 | **RHD4-02-002-L08-(SW)-GRP Pipes - 300 mm diameter** |  | 2026-08-09 | 2027-05-02 |  |  |  |
| RHD4CZ5L08SW1100 |  | Excavation works for GRP Pipe Line 300 mm - (RD-L-8)-Z5-L08-SW | 5d | 2026-08-09 A | 2027-04-03 | RHD4CZ5L08SW3200, RHD4ENSDZ5APPSW120 | 70% | -154d |
| RHD4CZ5L08SW1200 |  | Bedding works for GRP Pipe Line 300 mm - (RD-L-8)-Z5-L08-SW | 5d | 2026-08-11 A | 2027-04-06 | RHD4CZ5L08SW1100 | 70% | -154d |
| RHD4CZ5L08SW1300 |  | Installing for GRP Pipe Line 300 mm - (RD-L-8)-Z5-L08-SW | 5d | 2026-08-13 A | 2027-04-22 | RHD4CZ5L08SW1200, RHD4CZ5L08SW3300 | 70% | -164.02d |
| RHD4CZ5L08SW1500 |  | Backfilling and warning tape works for GRP Pipe Line 300 mm - (RD-L-8)-Z5-L08-SW | 5d | 2026-08-17 A | 2027-05-02 | RHD4CZ5L08SW1400 | 60% | -164.02d |
| RHD4CZ5L08SW1400 |  | Primary Test for GRP Pipe Line 300 mm - (RD-L-8)-Z5-L08-SW | 5d | 2027-04-22 | 2027-04-28 | RHD4CZ5L08SW1300 |  | -164.02d |
|  | 4357 | **RHD4-02-002-L08-(SW)-UPVC Pipes - 200 mm diameter** |  | 2026-08-13 | 2027-05-04 |  |  |  |
| RHD4CZ5L08SW2100 |  | Excavation works for UPVC Pipe Line 200 mm - (RD-L-8)-Z5-L08-SW | 2d | 2026-08-13 A | 2027-04-05 | RHD4CZ5L08SW1100, RHD4ENSDZ5APPSW120 | 70% | -142d |
| RHD4CZ5L08SW2200 |  | Bedding works for UPVC Pipe Line 200 mm - (RD-L-8)-Z5-L08-SW | 2d | 2026-08-15 A | 2027-04-08 | RHD4CZ5L08SW2100, RHD4CZ5L08SW1200 | 71% | -143d |
| RHD4CZ5L08SW2300 |  | Installing for UPVC Pipe Line 200 mm - (RD-L-8)-Z5-L08-SW | 2d | 2026-08-17 A | 2027-04-25 | RHD4CZ5L08SW2200, RHD4CZ5L08SW1300 | 72% | -154.02d |
| RHD4CZ5L08SW2500 |  | Backfilling and warning tape works for UPVC Pipe Line 200 mm - (RD-L-8)-Z5-L08-SW | 2d | 2026-08-19 A | 2027-05-04 | RHD4CZ5L08SW2400, RHD4CZ5L08SW1500 | 71% | -152.02d |
| RHD4CZ5L08SW2400 |  | Primary Test for UPVC Pipe Line 200 mm - (RD-L-8)-Z5-L08-SW | 2d | 2027-04-28 | 2027-05-01 | RHD4CZ5L08SW2300, RHD4CZ5L08SW1400 |  | -151.02d |
|  | 4358 | **RHD4-02-002-L08-(SW)-HDPE Pipes - 250 mm diameter** |  | 2027-03-31 | 2027-05-03 |  |  |  |
| RHD4CZ5L08SW2600 |  | Excavation works for HDPE Force Main Pipeline 250 mm - (RD-L-8)-Z5-L08-SW | 3d | 2027-03-31 | 2027-04-03 | RHD4CZ5L08SW1100 SS, RHD4ENSDZ5APPSW120 |  | -153d |
| RHD4CZ5L08SW2700 |  | Bedding works for HDPE Force Main Pipeline 250 mm - (RD-L-8)-Z5-L08-SW | 3d | 2027-04-04 | 2027-04-06 | RHD4CZ5L08SW2600, RHD4CZ5L08SW1200 SS |  | -153d |
| RHD4CZ5L08SW2800 |  | Installing for HDPE Force Main Pipeline 250 mm - (RD-L-8)-Z5-L08-SW | 5d | 2027-04-19 | 2027-04-25 | RHD4CZ5L08SW2700, RHD4CZ5L08SW1300 SS |  | -163.02d |
| RHD4CZ5L08SW2900 |  | Primary Test for HDPE Force Main Pipeline 250 mm - (RD-L-8)-Z5-L08-SW | 2d | 2027-04-25 | 2027-04-27 | RHD4CZ5L08SW2800, RHD4CZ5L08SW1400 SS |  | -163.02d |
| RHD4CZ5L08SW3000 |  | Backfilling and warning tape works for HDPE Force Main Pipeline 250 mm - (RD-L-8)-Z5-L08-SW | 4d | 2027-04-28 | 2027-05-03 | RHD4CZ5L08SW2900, RHD4CZ5L08SW1500 SS |  | -164.02d |
|  | 4360 | **RHD4-02-002-L08-(SW)-Concrete Encasement** |  | 2027-04-22 | 2027-05-19 |  |  |  |
| RHD4CZ5L08SW6100 |  | Pipe Encasement for Sewage Pipelines - (RD-L-8)-Z5-L08-SW | 19d | 2027-04-22 | 2027-05-19 | RHD4CZ5L08SW1300 FF, RHD4CZ5L08SW2300 FF, RHD4CZ5L08SW1300 SS, RHD4CZ5L08SW2300 SS, RHD4CZ5L08SW1200, RHD4CZ5L08SW2200, RHD4CZ5L08SW3501, RHD4CZ5L08ST2500 |  | -154.02d |
|  | 4388 | **RHD4-02-002-Z5-L08-Potable Network - PT** |  | 2026-08-04 | 2027-05-27 |  |  |  |
|  | 4389 | **RHD4-02-002-L08-(PT)-HDPE Pipes - 110 mm diameter** |  | 2026-08-04 | 2027-05-01 |  |  |  |
| RHD4CZ5L08PT1100 |  | Excavation works for HDPE Pipline 110 mm - (RD-L-8)-Z5-L08-PT | 2d | 2026-08-04 A | 2027-04-21 | RHD4ENSDZ5APPPT130, RHD4ENMSPT2000, RHD4CZ5L08SW3300 | 66% | -167.02d |
| RHD4CZ5L08PT1200 |  | Bedding works for HDPE Pipline 110 mm - (RD-L-8)-Z5-L08-PT | 2d | 2027-04-21 | 2027-04-24 | RHD4CZ5L08PT1100, RHD4CZ4C031ST8500 |  | -167.02d |
| RHD4CZ5L08PT1300 |  | Installing for HDPE Pipline 110 mm - (RD-L-8)-Z5-L08-PT | 2d | 2027-04-24 | 2027-04-26 | RHD4CZ5L08PT1200, RHD4PRSHLDOSPT1000, RHD4PRSHLSTAGPT1000 |  | -167.02d |
| RHD4CZ5L08PT1400 |  | Primary Test for HDPE Pipline 110 mm - (RD-L-8)-Z5-L08-PT | 2d | 2027-04-26 | 2027-04-28 | RHD4CZ5L08PT1300 |  | -167.02d |

| ID | WBS | Task | Duration | Start | Finish | Predecessors | Total float |
| --- | --- | --- | --- | --- | --- | --- | --- |
| RHD4CZ5L08PT1500 |  | Backfilling and warning tape works for HDPE Pipline 110 mm - (RD-L-8)-Z5-L08-PT | 2d | 2027-04-28 | 2027-05-01 | RHD4CZ5L08PT1400 | -167.02d |
|  | 4390 | **RHD4-02-002-L08-(PT)-HDPE Pipes - 160 mm diameter** |  | 2027-04-21 | 2027-05-13 |  |  |
| RHD4CZ5L08PT1101 |  | Excavation works for HDPE Pipline 160 mm - (RD-L-8)-Z5-L08-PT | 4d | 2027-04-21 | 2027-04-26 | RHD4ENSDZ5APPPT130, RHD4ENMSPT2000, RHD4CZ5L08PT1100 | -156.02d |
| RHD4CZ5L08PT1201 |  | Bedding works for HDPE Pipline 160 mm - (RD-L-8)-Z5-L08-PT | 3d | 2027-04-26 | 2027-04-29 | RHD4CZ5L08PT1101 | -156.02d |
| RHD4CZ5L08PT1301 |  | Installing for HDPE Pipline 160 mm - (RD-L-8)-Z5-L08-PT | 6d | 2027-04-29 | 2027-05-06 | RHD4CZ5L08PT1201, RHD4PRSHLDOSPT1000, RHD4PRSHLSTAGPT1000 | -156.02d |
| RHD4CZ5L08PT1401 |  | Primary Test for HDPE Pipline 160 mm - (RD-L-8)-Z5-L08-PT | 2d | 2027-05-06 | 2027-05-09 | RHD4CZ5L08PT1301, RHD4CZ5L08PT5100, RHD4CZ5L08PT3100 | -156.02d |
| RHD4CZ5L08PT1501 |  | Backfilling and warning tape works for HDPE Pipline 160 mm - (RD-L-8)-Z5-L08-PT | 4d | 2027-05-09 | 2027-05-13 | RHD4CZ5L08PT1401 | -156.02d |
|  | 4394 | **RHD4-02-002-L08-(PT)-Gate Valves (Direct Buried)** |  | 2027-04-29 | 2027-05-06 |  |  |
| RHD4CZ5L08PT3100 |  | Installation for Direct Buried Gate Valves - (RD-L-8)-Z5-L08-PT | 3d | 2027-04-29 | 2027-05-03 | RHD4CZ5L08PT1300 FF, RHD4CZ5L08PT1301 SS, RHD4CZ5L08PT1300 SS, RHD4PRSHLDOSPT1200, RHD4PRSHLSTAGPT1200 | -153.02d |
| RHD4CZ5L08PT3200 |  | Stem and Service box for Direct Buried Gate Valves - (RD-L-8)-Z5-L08-PT | 3d | 2027-05-03 | 2027-05-06 | RHD4CZ5L08PT3100 | -152.02d |
|  | 4399 | **RHD4-02-002-L08-(PT)-Air Valve Chambers** |  | 2027-04-26 | 2027-05-05 |  |  |
| RHD4CZ5L08PT2102 |  | Excavation and Bedding for Air Valve Chambers for Potable Water Network - (RD-L-8)-Z5-L08-PT | 2d | 2027-04-26 | 2027-04-28 | RHD4ENSDZ5APPPT130, RHD4CZ5L08PT1101 | -152.02d |
| RHD4CZ5L08PT2202 |  | PC works for Air Valve Chambers for Potable Water Network - (RD-L-8)-Z5-L08-PT | 2d | 2027-04-28 | 2027-05-01 | RHD4CZ5L08PT2102 | -152.02d |
| RHD4CZ5L08PT2302 |  | Installation for Air Valve Chambers for Potable Water Network - (RD-L-8)-Z5-L08-PT | 2d | 2027-05-01 | 2027-05-03 | RHD4CZ5L08PT2202 | -152.02d |
| RHD4CZ5L08PT2402 |  | Backfilling works for Air Valve Chambers for Potable Water Network - (RD-L-8)-Z5-L08-PT | 2d | 2027-05-03 | 2027-05-05 | RHD4CZ5L08PT2302 | -152.02d |
|  | 4400 | **RHD4-02-002-L08-(PT)-Air Valves** |  | 2027-05-03 | 2027-05-08 |  |  |
| RHD4CZ5L08PT3103 |  | Installation for Air Valves for Potable Water Network - (RD-L-8)-Z5-L08-PT | 2d | 2027-05-03 | 2027-05-05 | RHD4CZ5L08PT2302, RHD4PRSHLDOSPT1200, RHD4PRSHLSTAGPT1200 | -152.02d |
| RHD4CZ5L08PT3203 |  | Stem and Service box for Air Valves for Potable Water Network - (RD-L-8)-Z5-L08-PT | 2d | 2027-05-05 | 2027-05-08 | RHD4CZ5L08PT3103, RHD4CZ5L08PT2402 | -152.02d |
|  | 4401 | **RHD4-02-002-L08-(PT)-Fire Hydrant** |  | 2027-05-01 | 2027-05-27 |  |  |
| RHD4CZ5L08PT4100 |  | Excavation and Bedding and Pipe Installation for Fire Hydrant - (RD-L-8)-Z5-L08-PT | 5d | 2027-05-01 | 2027-05-06 | RHD4CZ5L08PT1500, RHD4ENSDZ5APPPT130 | -167.02d |
| RHD4CZ5L08PT4200 |  | Valve Installation for Fire Hydrant - (RD-L-8)-Z5-L08-PT | 4d | 2027-05-06 | 2027-05-11 | RHD4CZ5L08PT4100, RHD4CZ5L07PT3202, RHD4CZ5L07PT3203, RHD4CZ5L08SW3000, RHD4CZ2C082PT3203 | -167.02d |
| RHD4CZ5L08PT4300 |  | Stem for Fire Hydrant - (RD-L-8)-Z5-L08-PT | 4d | 2027-05-11 | 2027-05-20 | RHD4CZ5L08PT4200 | -167.02d |
| RHD4CZ5L08PT4400 |  | Fire Installation for Fire Hydrant - (RD-L-8)-Z5-L08-PT | 4d | 2027-05-20 | 2027-05-25 | RHD4CZ5L08PT4300, RHD4PRSHLDOSPT1500, RHD4PRSHLSTAGPT1500, RHD4CZ5RA07PT4500, RHD4CZ5RA07PT3203, RHD4CZ5RA07PT3202, RHD4CZ5RA07IRR3202, RHD4CZ2C082IRR3200 | -167.02d |
| RHD4CZ5L08PT4500 |  | Protection Barriers for Fire Hydrant - (RD-L-8)-Z5-L08-PT | 2d | 2027-05-25 | 2027-05-27 | RHD4CZ5L08PT4400 | -167.02d |
|  | 4402 | **RHD4-02-002-L08-(PT)-Concrete Encasement** |  | 2027-05-04 | 2027-05-06 |  |  |
| RHD4CZ5L08PT5100 |  | Pipe Encasement for Potable Pipelines - (RD-L-8)-Z5-L08-PT | 2d | 2027-05-04 | 2027-05-06 | RHD4CZ5L08PT1301 FF, RHD4CZ5L08PT1300 FF, RHD4CZ5L08PT1301 SS, RHD4CZ5L08PT1300 SS, RHD4CZ5L08PT1200, RHD4CZ5L08PT1201 | -156.02d |
|  | 4403 | **RHD4-02-002-Z5-L08-Irrigation Network - IRR** |  | 2027-05-01 | 2027-06-15 |  |  |
|  | 4404 | **RHD4-02-002-L08-(IRR)-HDPE Pipes - 160 mm diameter** |  | 2027-05-27 | 2027-06-08 |  |  |
| RHD4CZ5L08IRR1100 |  | Excavation works for HDPE Pipline 160 mm - (RD-L-8)-Z5-L08-IRR | 2d | 2027-05-27 | 2027-05-30 | RHD4CZ5L08PT1101, RHD4ENSDZ5APPIRR140, RHD4ENMSRR2000, RHD4CZ5L08PT1500, RHD4CZ5L08PT4500 | -167.02d |
| RHD4CZ5L08IRR1200 |  | Bedding works for HDPE Pipline 160 mm - (RD-L-8)-Z5-L08-IRR | 2d | 2027-05-30 | 2027-06-01 | RHD4CZ5L08IRR1100 | -167.02d |
| RHD4CZ5L08IRR1300 |  | Installing for HDPE Pipline 160 mm - (RD-L-8)-Z5-L08-IRR | 2d | 2027-06-01 | 2027-06-03 | RHD4CZ5L08IRR1200, RHD4PRSHLDOSIRR1000, RHD4PRSHLSTAGIRR1000 | -167.02d |
| RHD4CZ5L08IRR1400 |  | Primary Test for HDPE Pipline 160 mm - (RD-L-8)-Z5-L08-IRR | 2d | 2027-06-03 | 2027-06-06 | RHD4CZ5L08IRR1300 | -156.02d |
| RHD4CZ5L08IRR1500 |  | Backfilling and warning tape works for HDPE Pipline 160 mm - (RD-L-8)-Z5-L08-IRR | 2d | 2027-06-06 | 2027-06-08 | RHD4CZ5L08IRR1400 | -156.02d |
|  | 4412 | **RHD4-02-002-L08-(IRR)-Gate Valves (Direct Buried)** |  | 2027-06-01 | 2027-06-10 |  |  |
| RHD4CZ5L08IRR3100 |  | Installation for Direct Buried Gate Valves - (RD-L-8)-Z5-L08-IRR | 2d | 2027-06-01 | 2027-06-03 | RHD4CZ5L08IRR1302 SS, RHD4CZ5L08IRR1302 FF, RHD4CZ5L08IRR1300 SS, RHD4CZ5L08IRR1300 FF, RHD4PRSHLDOSIRR1100, RHD4PRSHLSTAGIRR1100 | -167.02d |
| RHD4CZ5L08IRR3200 |  | Stem and Service box for Direct Buried Gate Valves - (RD-L-8)-Z5-L08-IRR | 2d | 2027-06-08 | 2027-06-10 | RHD4CZ5L08IRR3100, RHD4CZ5L08IRR1500, RHD4PRSHLDOSIRR1300, RHD4PRSHLSTAGIRR1300 | -156.02d |
|  | 6685 | **RHD4-02-002-L08-(IRR)-Wash out Chamber** |  | 2027-06-03 | 2027-06-13 |  |  |
| RHD4CZ5L08IRR2101 |  | Excavation and Bedding for Wash out Chamber for Irrigation Network - (RD-L-8)-Z5-L08-IRR | 2d | 2027-06-03 | 2027-06-06 | RHD4CZ5L08IRR3100 | -167.02d |
| RHD4CZ5L08IRR2201 |  | PC works for Wash out Chamber for Irrigation Network - (RD-L-8)-Z5-L08-IRR | 2d | 2027-06-06 | 2027-06-08 | RHD4CZ5L08IRR2101 | -167.02d |
| RHD4CZ5L08IRR2301 |  | Installation for Wash out Chamber for Irrigation Network - (RD-L-8)-Z5-L08-IRR | 2d | 2027-06-08 | 2027-06-10 | RHD4CZ5L08IRR2201 | -167.02d |
| RHD4CZ5L08IRR2401 |  | Backfilling works for Wash out Chamber for Irrigation Network - (RD-L-8)-Z5-L08-IRR | 2d | 2027-06-10 | 2027-06-13 | RHD4CZ5L08IRR2301 | -167.02d |
|  | 6686 | **RHD4-02-002-L08-(IRR)-Wash out Valves** |  | 2027-06-10 | 2027-06-15 |  |  |
| RHD4CZ5L08IRR3102 |  | Installation for Wash out Valve for Irrigation Network - (RD-L-8)-Z5-L08-IRR | 2d | 2027-06-10 | 2027-06-13 | RHD4CZ5L08IRR3100, RHD4CZ5L08IRR2301 | -167.02d |
| RHD4CZ5L08IRR3202 |  | Stem and Service box for Wash out Valve for Irrigation Network - (RD-L-8)-Z5-L08-IRR | 2d | 2027-06-13 | 2027-06-15 | RHD4CZ5L08IRR3102, RHD4CZ5L08IRR2401 | -167.02d |
|  | 4406 | **RHD4-02-002-L08-(IRR)-HDPE Pipes - 200 mm diameter** |  | 2027-05-01 | 2027-06-10 |  |  |
| RHD4CZ5L08IRR1102 |  | Excavation works for HDPE Pipline 200 mm - (RD-L-8)-Z5-L08-IRR | 5d | 2027-05-01 | 2027-05-06 | RHD4CZ5L08PT1101, RHD4CZ5L08PT1100, RHD4ENSDZ5APPIRR140, RHD4ENMSRR2000, RHD4CZ5L08PT1500, RHD4CZ5C061MV2400 | -156.02d |
| RHD4CZ5L08IRR1202 |  | Bedding works for HDPE Pipline 200 mm - (RD-L-8)-Z5-L08-IRR | 4d | 2027-05-06 | 2027-05-11 | RHD4CZ5L08IRR1102 | -156.02d |
| RHD4CZ5L08IRR1302 |  | Installing for HDPE Pipline 200 mm - (RD-L-8)-Z5-L08-IRR | 5d | 2027-05-11 | 2027-05-22 | RHD4CZ5L08IRR1202, RHD4PRSHLDOSIRR1000, RHD4PRSHLSTAGIRR1000 | -156.02d |
| RHD4CZ5L08IRR1402 |  | Primary Test for HDPE Pipline 200 mm - (RD-L-8)-Z5-L08-IRR | 2d | 2027-06-03 | 2027-06-06 | RHD4CZ5L08IRR1302, RHD4CZ5L08IRR3100 | -156.02d |
| RHD4CZ5L08IRR1502 |  | Backfilling and warning tape works for HDPE Pipline 200 mm - (RD-L-8)-Z5-L08-IRR | 4d | 2027-06-06 | 2027-06-10 | RHD4CZ5L08IRR1402 | -156.02d |
|  | 4437 | **RHD4-02-002-Z5-L08-Medium Voltage Network - MV** |  | 2027-08-04 | 2027-10-16 |  |  |
|  | 4438 | **RHD4-02-002-L08-(MV)-Medium Voltage cable trench** |  | 2027-08-04 | 2027-10-06 |  |  |
| RHD4CZ5L08MV1100 |  | Excavation for Medium Voltage Trench - (RD-L-8)-Z5-L08-MV | 15d | 2027-08-04 | 2027-08-21 | RHD4ENSDZ5APPMV150, RHD4CZ5L08RD3100, RHD4CZ5C061MV1100 | -153d |
| RHD4CZ5L08MV1200 |  | Trench Backfilling for Medium Voltage Network - (RD-L-8)-Z5-L08-MV | 15d | 2027-09-19 | 2027-10-06 | RHD4CZ5L08MV1100, RHD4CZ5L08MV3300 | -153d |
|  | 4439 | **RHD4-02-002-L08-(MV)-Medium Voltage duct banks** |  | 2027-10-07 | 2027-10-16 |  |  |
| RHD4CZ5L08MV2100 |  | Excavation of Duct Banks for Medium Voltage Network - (RD-L-8)-Z5-L08-MV | 2d | 2027-10-07 | 2027-10-09 | RHD4ENSDZ5APPMV150, RHD4CZ5L08MV1200 | -153d |
| RHD4CZ5L08MV2200 |  | Installation of Duct Banks for Medium Voltage Network - (RD-L-8)-Z5-L08-MV | 2d | 2027-10-10 | 2027-10-11 | RHD4CZ5L08MV2100 | -153d |
| RHD4CZ5L08MV2300 |  | Pouring of Duct Banks for Medium Voltage Network - (RD-L-8)-Z5-L08-MV | 2d | 2027-10-12 | 2027-10-13 | RHD4CZ5L08MV2200 | -153d |
| RHD4CZ5L08MV2400 |  | Backfilling of Duct Banks for Medium Voltage Network - (RD-L-8)-Z5-L08-MV | 2d | 2027-10-14 | 2027-10-16 | RHD4CZ5L08MV2300 | -153d |
|  | 4440 | **RHD4-02-002-L08-(MV)-Medium Voltage cables 3Cx 500 mm²** |  | 2027-08-22 | 2027-09-20 |  |  |
| RHD4CZ5L08MV3100 |  | Installation of Medium Voltage Cables 3Cx 500 mm² - (RD-L-8)-Z5-L08-MV | 16d | 2027-08-22 | 2027-09-08 | RHD4CZ5L08MV1100, RHD4ENMSMV2000, RHD4ENMSMV2010 | -153d |
| RHD4CZ5L08MV3200 |  | Joints Installation of Medium Voltage Cables 3Cx 500 mm² - (RD-L-8)-Z5-L08-MV | 3d | 2027-09-09 | 2027-09-12 | RHD4PRSHLDOSMV1300, RHD4CZ5L08MV3100 | -153d |
| RHD4CZ5L08MV3300 |  | Testing of Medium Voltage Cables 3Cx 500 mm² - (RD-L-8)-Z5-L08-MV | 5d | 2027-09-13 | 2027-09-18 | RHD4CZ5L08MV3200 | -153d |
| RHD4CZ5L08MV3400 |  | Termination of Medium Voltage Cables 3Cx 500 mm² - (RD-L-8)-Z5-L08-MV | 2d | 2027-09-19 | 2027-09-20 | RHD4CZ5L08MV3300 | -134d |
|  | 4441 | **RHD4-02-002-L08-(MV)-Medium Voltage cables 3Cx 50 mm²** |  | 2027-09-21 | 2027-09-22 |  |  |
| RHD4CZ5L08MV3401 |  | Termination of Medium Voltage Cables 3Cx 50 mm² - (RD-L-8)-Z5-L08-MV | 2d | 2027-09-21 | 2027-09-22 | RHD4CZ5L08MV3400 | -134d |
|  | 4442 | **RHD4-02-002-L08-(MV)-Normally open Point (Outdoor Type)** |  | 2027-09-07 | 2027-09-11 |  |  |
| RHD4CZ5L08MV4100 |  | Installation for Normally open Point - (RD-L-8)-Z5-L08-MV | 2d | 2027-09-07 | 2027-09-08 | RHD4CZ5L08MV3100 FF, RHD4PRSHLDOSMV1400, RHD4PRSHLSTAGMV1400 | -124d |
| RHD4CZ5L08MV4200 |  | Termination for Normally open Point - (RD-L-8)-Z5-L08-MV | 2d | 2027-09-09 | 2027-09-11 | RHD4CZ5L08MV4100 | -124d |
|  | 4444 | **RHD4-02-002-Z5-L08-Low Voltage Network - LV** |  | 2027-06-15 | 2027-06-29 |  |  |

| ID | WBS | Task | Duration | Start | Finish | Predecessors | Total float |
| --- | --- | --- | --- | --- | --- | --- | --- |
|  | 4445 | **RHD4-02-002-L08-(LV)-Low Voltage duct banks** |  |  |  |  |  |
|  | 4257 | **RHD4-02-002-L08-(LV)-Low Voltage Drawpit** |  |  |  |  |  |
|  | 4447 | **RHD4-02-002-L08-(LV)-Low Voltage cables** |  | 2027-06-15 | 2027-06-29 |  |  |
| RHD4CZ5L08LV3100 |  | Excavation for Low Voltage Cables for Low Voltage Network - (RD-L-8)-Z5-L08-LV | 4d | 2027-06-15 | 2027-06-20 | RHD4ENSDZ5APPLV160, RHD4CZ5L08IRR3202 | -153.02d |
| RHD4CZ5L08LV3200 |  | Cable Laying of Low Voltage Cables for Low Voltage Network - (RD-L-8)-Z5-L08-LV | 3d | 2027-06-20 | 2027-06-23 | RHD4CZ5L08LV3100, RHD4PRSHLDOSLV1100, RHD4ENMSLV2000, RHD4ENMSLV2010, RHD4PRSHLSTAGLV1100 | -138.02d |
| RHD4CZ5L08LV3300 |  | Warning tape and Backfill for Low Voltage Cables for Low Voltage Network - (RD-L-8)-Z5-L08-LV | 3d | 2027-06-23 | 2027-06-27 | RHD4CZ5L08LV3200 | -138.02d |
| RHD4CZ5L08LV3400 |  | Testing of Low Voltage Cables for Low Voltage Network - (RD-L-8)-Z5-L08-LV | 2d | 2027-06-27 | 2027-06-29 | RHD4CZ5L08LV3300 | -138.02d |
|  | 4259 | **RHD4-02-002-L08-(LV)-Low Voltage Distribution Pillars** |  | 2027-06-20 | 2027-06-27 |  |  |
| RHD4CZ5L08LV4100 |  | Leveling for Distribution Pillars for Low Voltage Network - (RD-L-8)-Z5-L08-LV | 2d | 2027-06-20 | 2027-06-22 | RHD4CZ5L08LV3100 | -136.02d |
| RHD4CZ5L08LV4200 |  | Lean Concrete for Distribution Pillars for Low Voltage Network - (RD-L-8)-Z5-L08-LV | 2d | 2027-06-22 | 2027-06-24 | RHD4CZ5L08LV4100 | -136.02d |
| RHD4CZ5L08LV4300 |  | Installation of Distribution Pillars for Low Voltage Network - (RD-L-8)-Z5-L08-LV | 2d | 2027-06-24 | 2027-06-27 | RHD4CZ5L08LV4200 | -136.02d |
|  | 4450 | **RHD4-02-002-Z5-L08-Street Lighting Network - SL** |  | 2027-06-20 | 2027-08-24 |  |  |
|  | 4451 | **RHD4-02-002-L08-(SL)-Street Lighting duct banks** |  | 2027-06-20 | 2027-06-29 |  |  |
| RHD4CZ5L08SL2100 |  | Excavation of Duct Banks for Street Lighting Network - (RD-L-8)-Z5-L08-SL | 2d | 2027-06-20 | 2027-06-22 | RHD4ENSDZ5APPSL170, RHD4CZ5L08LV3100 | -138.02d |
| RHD4CZ5L08SL2200 |  | Installation of Duct Banks for Street Lighting Network - (RD-L-8)-Z5-L08-SL | 2d | 2027-06-22 | 2027-06-24 | RHD4CZ5L08SL2100 | -138.02d |
| RHD4CZ5L08SL2300 |  | Pouring of Duct Banks for Street Lighting Network - (RD-L-8)-Z5-L08-SL | 2d | 2027-06-24 | 2027-06-27 | RHD4CZ5L08SL2200 | -138.02d |
| RHD4CZ5L08SL2400 |  | Backfilling of Duct Banks for Street Lighting Network - (RD-L-8)-Z5-L08-SL | 2d | 2027-06-27 | 2027-06-29 | RHD4CZ5L08SL2300 | -138.02d |
|  | 4452 | **RHD4-02-002-L08-(SL)-Street Lighting Drawpit** |  | 2027-06-29 | 2027-07-04 |  |  |
| RHD4CZ5L08SL5100 |  | Excavation of Drawpit size 600x600x900mm for Street Lighting Network - (RD-L-8)-Z5-L08-SL | 2d | 2027-06-29 | 2027-07-01 | RHD4CZ5L08SL2300, RHD4ENSDZ5APPSL170, RHD4CZ5L08LV3400, RHD4CZ5L08LV4300, RHD4CZ5L08SL2400 | -138.02d |
| RHD4CZ5L08SL5200 |  | Installation of Drawpit size 600x600x900mm for Street Lighting Network - (RD-L-8)-Z5-L08-SL | 2d | 2027-07-01 | 2027-07-04 | RHD4CZ5L08SL5100, RHD4PRSHLDOSSL1400, RHD4PRSHLSTAGSL1400 | -138.02d |
|  | 4453 | **RHD4-02-002-L08-(SL)-Street Lighting cables** |  | 2027-07-04 | 2027-07-31 |  |  |
| RHD4CZ5L08SL3100 |  | Excavation for Street Lighting Cables for Street Lighting Network - (RD-L-8)-Z5-L08-SL | 7d | 2027-07-04 | 2027-07-12 | RHD4ENSDZ5APPSL170, RHD4CZ5L08SL5200 | -138.02d |
| RHD4CZ5L08SL3200 |  | Cable Laying of Street Lighting Cables for Street Lighting Network - (RD-L-8)-Z5-L08-SL | 6d | 2027-07-12 | 2027-07-19 | RHD4CZ5L08SL3100, RHD4ENMSSL2000, RHD4ENMSSL2010 | -138.02d |
| RHD4CZ5L08SL3300 |  | Warning tape and Backfill for Street Lighting Cables for Street Lighting Network - (RD-L-8)-Z5-L08-SL | 6d | 2027-07-19 | 2027-07-26 | RHD4CZ5L08SL3200 | -138.02d |
| RHD4CZ5L08SL3400 |  | Testing of Street Lighting Cables for Street Lighting Network - (RD-L-8)-Z5-L08-SL | 4d | 2027-07-26 | 2027-07-31 | RHD4CZ5L08SL3300 | -138.02d |
|  | 4454 | **RHD4-02-002-L08-(SL)-Street Lighting Poles** |  | 2027-07-31 | 2027-08-24 |  |  |
| RHD4CZ5L08SL1100 |  | Excavation for RC Base for Lighting Poles for Street Lighting Network - (RD-L-8)-Z5-L08-SL | 4d | 2027-07-31 | 2027-08-04 | RHD4ENSDZ5APPSL170, RHD4CZ5L08SL3400 | -138.02d |
| RHD4CZ5L08SL1200 |  | Installation for RC Base for Lighting Poles for Street Lighting Network - (RD-L-8)-Z5-L08-SL | 4d | 2027-08-04 | 2027-08-09 | RHD4CZ5L08SL1100 | -138.02d |
| RHD4CZ5L08SL1300 |  | Backfill for RC Base for Lighting Poles for Street Lighting Network - (RD-L-8)-Z5-L08-SL | 4d | 2027-08-09 | 2027-08-14 | RHD4CZ5L08SL1200 | -138.02d |
| RHD4CZ5L08SL1400 |  | Installation for Lighting Poles for Street Lighting Network - (RD-L-8)-Z5-L08-SL | 5d | 2027-08-14 | 2027-08-19 | RHD4CZ5L08SL1300, RHD4ENMSSL2000, RHD4ENMSSL2010 | -138.02d |
| RHD4CZ5L08SL1500 |  | Luminaire Installation for Lighting Poles for Street Lighting Network - (RD-L-8)-Z5-L08-SL | 4d | 2027-08-19 | 2027-08-24 | RHD4CZ5L08SL1400, RHD4PRSHLDOSSL1300, RHD4PRSHLSTAGSL1300 | -138.02d |
|  | 4462 | **RHD4-02-002-Z5-L08-Telecommunications Network - TC** |  | 2027-01-30 | 2027-10-02 |  |  |
|  | 4463 | **RHD4-02-002-L08-(TC)-Telecommunications Ducts** |  | 2027-08-24 | 2027-10-02 |  |  |
| RHD4CZ5L08TC2100 |  | Excavation of HDPE Ducts for Telecom Network - (RD-L-8)-Z5-L08-TC | 9d | 2027-08-24 | 2027-09-04 | RHD4CZ5L08TC3400, RHD4ENSDZ5APPTC190, RHD4CZ5L08SL1500 | -138.02d |
| RHD4CZ5L08TC2200 |  | Installation of HDPE Ducts for Telecom Network - (RD-L-8)-Z5-L08-TC | 14d | 2027-09-04 | 2027-09-20 | RHD4CZ5L08TC2100, RHD4PRSHLDOSTC1000, RHD4PRSHLSTAGTC1000 | -138.02d |
| RHD4CZ5L08TC2400 |  | Backfilling of HDPE Ducts for Telecom Network - (RD-L-8)-Z5-L08-TC | 9d | 2027-09-20 | 2027-10-02 | RHD4CZ5L08TC2200, RHD4CZ5L08TC5200, RHD4CZ5L08TC5200 FF | -138.02d |
|  | 4464 | **RHD4-02-002-L08-(TC)-Telecommunications Manholes** |  | 2027-09-04 | 2027-09-15 |  |  |
| RHD4CZ5L08TC5100 |  | Excavation for Manholes for Telecom Network - (RD-L-8)-Z5-L08-TC | 5d | 2027-09-04 | 2027-09-09 | RHD4CZ5L08TC2100, RHD4ENSDZ5APPTC190 | -134.02d |
| RHD4CZ5L08TC5200 |  | Installation of Manholes for Telecom Network - (RD-L-8)-Z5-L08-TC | 5d | 2027-09-09 | 2027-09-15 | RHD4CZ5L08TC5100, RHD4CZ5L08TC2200 SS, RHD4PRSHLDOSTC1200, RHD4PRSHLSTAGTC1200 | -134.02d |
|  | 4465 | **RHD4-02-002-L08-(TC)-Telecomminications Road Crossings** |  | 2027-01-30 | 2027-02-08 |  |  |
| RHD4CZ5L08TC3100 |  | Excavation for Road Crossings for Telecom Network - (RD-L-8)-Z5-L08-TC | 2d | 2027-01-30 | 2027-01-31 | RHD4ENSDZ5APPTC190, RHD4CZ5L08ST3102 | -169d |
| RHD4CZ5L08TC3200 |  | Installation of Road Crossings for Telecom Network - (RD-L-8)-Z5-L08-TC | 2d | 2027-02-01 | 2027-02-02 | RHD4CZ5L08TC3100, RHD4PRSHLDOSTC1100, RHD4PRSHLSTAGTC1100 | -169d |
| RHD4CZ5L08TC3300 |  | Pouring of Road Crossings for Telecom Network - (RD-L-8)-Z5-L08-TC | 2d | 2027-02-03 | 2027-02-04 | RHD4CZ5L08TC3200 | -169d |
| RHD4CZ5L08TC3400 |  | Backfilling of Road Crossings for Telecom Network - (RD-L-8)-Z5-L08-TC | 2d | 2027-02-07 | 2027-02-08 | RHD4CZ5L08TC3300, RHD4CZ6A02ST7500 | -170d |
|  | 4466 | **RHD4-02-002-Z5-L08-Information and Communication Technologies - ICT** |  | 2027-10-02 | 2027-11-10 |  |  |
|  | 4467 | **RHD4-02-002-L08-(ICT)-Information and Communication Technologies Ducts** |  | 2027-10-02 | 2027-11-10 |  |  |
| RHD4CZ5L08ICT2100 |  | Excavation of HDPE Ducts for ICT Network - (RD-L-8)-Z5-L08-ICT | 10d | 2027-10-02 | 2027-10-13 | RHD4ENSDZ5APPICT200, RHD4CZ5L08TC2400 | -138.02d |
| RHD4CZ5L08ICT2200 |  | Installation of HDPE Ducts for ICT Network - (RD-L-8)-Z5-L08-ICT | 14d | 2027-10-13 | 2027-10-30 | RHD4CZ5L08ICT2100, RHD4PRSHLDOSICT1000, RHD4PRSHLSTAGICT1000 | -138.02d |
| RHD4CZ5L08ICT2400 |  | Backfilling of HDPE Ducts for ICT Network - (RD-L-8)-Z5-L08-ICT | 10d | 2027-10-30 | 2027-11-10 | RHD4CZ5L08ICT2200, RHD4CZ5L08ICT5200 | -138.02d |
|  | 4468 | **RHD4-02-002-L08-(ICT)-Information and Communication Technologies Manholes** |  | 2027-10-13 | 2027-10-25 |  |  |
| RHD4CZ5L08ICT5100 |  | Excavation for Manholes for ICT Network - (RD-L-8)-Z5-L08-ICT | 5d | 2027-10-13 | 2027-10-19 | RHD4CZ5L08ICT2100, RHD4ENSDZ5APPICT200 | -134.02d |
| RHD4CZ5L08ICT5200 |  | Installation of Manholes for ICT Network - (RD-L-8)-Z5-L08-ICT | 5d | 2027-10-19 | 2027-10-25 | RHD4CZ5L08ICT5100, RHD4CZ5L08ICT2200 SS, RHD4PRSHLDOSICT1200, RHD4PRSHLSTAGICT1200 | -134.02d |
|  | 5415 | **RHD4-02-002-L08-(ICT)-Information and Communication Technologies Road Crossings** |  |  |  |  |  |
|  | 4457 | **RHD4-02-002-Z5-L08-Landscape Network - LS** |  |  |  |  |  |
|  | 4458 | **RHD4-02-002-L08-(LS)-Landscape Lighting cables** |  |  |  |  |  |
|  | 4459 | **RHD4-02-002-L08-(LS)-Landscape Feeder Pillars** |  |  |  |  |  |
|  | 4460 | **RHD4-02-002-L08-(LS)-Landscape Bollard Poles** |  |  |  |  |  |
|  | 4461 | **RHD4-02-002-L08-(LS)-Landscape Feeder Pillars Earthing** |  |  |  |  |  |
|  | 4470 | **RHD4-02-002-Z5-L08-Security Network - CCTV** |  |  |  |  |  |
|  | 4471 | **RHD4-02-002-L08-(CCTV)-Civil Works** |  |  |  |  |  |
|  | 4851 | **RHD4-02-002-L08-(CCTV)-CCTV Poles** |  |  |  |  |  |
|  | 4852 | **RHD4-02-002-L08-(CCTV)-Camera** |  |  |  |  |  |
|  | 4853 | **RHD4-02-002-L08-(CCTV)-Power and Infrastructure** |  |  |  |  |  |
|  | 4855 | **RHD4-02-002-L08-(CCTV)-CCTV Panels and Components** |  |  |  |  |  |
|  | 3731 | **RHD4-02-002-Z5-L016** |  | 2026-06-03 | 2028-03-13 |  |  |
|  | 3762 | **RHD4-02-002-Z5-L016-Crossings Sewage Network - SWCr** |  |  |  |  |  |
|  | 3772 | **RHD4-02-002-L016-(SWCr)-MH Works - 1200 mm diameter** |  |  |  |  |  |
|  | 3763 | **RHD4-02-002-L016-(SWCr)-GRP Pipes - 300 mm diameter** |  |  |  |  |  |
|  | 3768 | **RHD4-02-002-L016-(SWCr)-UPVC Pipes - 200 mm diameter** |  |  |  |  |  |
|  | 3769 | **RHD4-02-002-L016-(SWCr)-HDPE Pipes - 250 mm diameter** |  |  |  |  |  |

| ID | WBS | Task | Duration | Start | Finish | Predecessors | Complete | Total float |
| --- | --- | --- | --- | --- | --- | --- | --- | --- |
|  | 3783 | **RHD4-02-002-L016-(SWCr)-Gate Valves (Direct Buried)** |  |  |  |  |  |  |
|  | 3806 | **RHD4-02-002-Z5-L016-Crossings Potable Network - PTCr** |  |  |  |  |  |  |
|  | 3809 | **RHD4-02-002-L016-(PTCr)-HDPE Pipes - 200 mm diameter** |  |  |  |  |  |  |
|  | 3808 | **RHD4-02-002-L016-(PTCr)-HDPE Pipes - 160 mm diameter** |  |  |  |  |  |  |
|  | 3807 | **RHD4-02-002-L016-(PTCr)-HDPE Pipes - 110 mm diameter** |  |  |  |  |  |  |
|  | 3812 | **RHD4-02-002-L016-(PTCr)-Gate Valves (Direct Buried)** |  |  |  |  |  |  |
|  | 3853 | **RHD4-02-002-Z5-L016-Crossings Irrigation Network - IRRC** |  |  |  |  |  |  |
|  | 3854 | **RHD4-02-002-L016-(IRRC)-HDPE Pipes - 160 mm diameter** |  |  |  |  |  |  |
|  | 3856 | **RHD4-02-002-L016-(IRRC)-HDPE Pipes - 200 mm diameter** |  |  |  |  |  |  |
|  | 3858 | **RHD4-02-002-L016-(IRRC)-HDPE Pipes - 315 mm diameter** |  |  |  |  |  |  |
|  | 3862 | **RHD4-02-002-L016-(IRRC)-Gate Valves (Direct Buried)** |  |  |  |  |  |  |
|  | 3863 | **RHD4-02-002-L016-(IRRC)-Butterfly Valve Chamber** |  |  |  |  |  |  |
|  | 3864 | **RHD4-02-002-L016-(IRRC)-Butterfly Valves** |  |  |  |  |  |  |
|  | 3867 | **RHD4-02-002-L016-(IRRC)-Air Valve Chamber** |  |  |  |  |  |  |
|  | 3868 | **RHD4-02-002-L016-(IRRC)-Air Valves** |  |  |  |  |  |  |
|  | 3910 | **RHD4-02-002-Z5-L016-Road Works - RD** |  | 2026-06-03 | 2028-03-13 |  |  |  |
|  | 3911 | **RHD4-02-002-L016-(RD)-Subgrade** |  | 2026-06-03 | 2026-08-03 |  |  |  |
| RHD4CZ5L016RD1100 |  | Supply, lay and compaction subgrade compacted thickness 300 mm for Roads - (RD-L-16)-Z5-L016-RD(Completed) | 7d | 2026-06-03 A | 2026-08-03 A | RHD4ENSDZ5APPRD220, RHD4ENSDZ5APPEW100 SS, RHD4CZ5L016ST3302, RHD4CZ5L016ST1508, RHD4CZ5L016ICT3400, RHD4CZ5L016TC3400 | 100% |  |
|  | 3912 | **RHD4-02-002-L016-(RD)-Aggregate Base Course** |  | 2027-02-21 | 2027-02-27 |  |  |  |
| RHD4CZ5L016RD2100 |  | Supply, lay and compaction Aggregate base course compacted thickness 300 mmfor Roads - (RD-L-16)-Z5-L016-RD | 5d | 2027-02-21 | 2027-02-27 | RHD4PRSHLDOSRD1000, RHD4PRSHLSTAGRD1000, RHD4ENSDZ5APPRD220, RHD4ENSDZ5APPEW100 SS, RHD4CZ5L016RD1100 |  | -181d |
|  | 3913 | **RHD4-02-002-L016-(RD)-Bituminous base course Two Layers, including (MC1)&(RC2)** |  | 2027-02-28 | 2028-02-07 |  |  |  |
| RHD4CZ5L016RD3100 |  | Supply, lay and Asphaltic base course including Prime Coat (MC1) for 1st Layer - (RD-L-16)-Z5-L016-RD | 2d | 2027-02-28 | 2027-03-01 | RHD4CZ5L016RD2100, RHD4PRSHLDOSRD1100, RHD4ENMSASPH2000, RHD4ENMSASPH2010, RHD4PRSHLSTAGRD1100 |  | -181d |
| RHD4CZ5L016RD3200 |  | Supply, lay and Asphaltic base course including Tack Coat (RC2) for 2nd Layer - (RD-L-16)-Z5-L016-RD | 2d | 2028-02-05 | 2028-02-07 | RHD4PRSHLDOSRD1100, RHD4PRSHLSTAGRD1100, RHD4CZ5L016CCTV6100 |  | -115.02d |
|  | 3915 | **RHD4-02-002-L016-(RD)-Precast Concrete Curb** |  | 2028-02-07 | 2028-02-13 |  |  |  |
| RHD4CZ5L016RD5100 |  | Supply and installation Precast Concrete Kerb for Roads - (RD-L-16)-Z5-L016-RD | 5d | 2028-02-07 | 2028-02-13 | RHD4CZ5L016RD3200, RHD4PRSHLDOSRD1200, RHD4ENMSRD2000, RHD4ENMSRD2010, RHD4PRSHLSTAGRD1200, RHD4CZ5L08RD5100 |  | -115.02d |
|  | 3918 | **RHD4-02-002-L016-(RD)-Traffic Signage** |  | 2028-02-13 | 2028-02-20 |  |  |  |
| RHD4CZ5L016RD8100 |  | Installation of Traffic Signage for Road Network - (RD-L-16)-Z5-L016-RD | 6d | 2028-02-13 | 2028-02-20 | RHD4CZ5L016RD5100, RHD4PRSHLDOSRD1600, RHD4PRSHLSTAGRD1600, RHD4CZ5L08RD8100 |  | -115.02d |
|  | 3916 | **RHD4-02-002-L016-(RD)-Precast Interlocking Block Pavers** |  | 2028-02-20 | 2028-03-02 |  |  |  |
| RHD4CZ5L016RD6100 |  | Interlocking block pavers for sidewalk-footpath for Side walks and Parking areas - (RD-L-16)-Z5-L016-RD | 6d | 2028-02-20 | 2028-03-02 | RHD4CZ5L016RD8100, RHD4PRSHLDOSRD1300, RHD4PRSHLDOSRD1400, RHD4ENMSRD2000, RHD4ENMSRD2010, RHD4PRSHLSTAGRD1300, RHD4PRSHLSTAGRD1400 |  | -115.02d |
|  | 3914 | **RHD4-02-002-L016-(RD)-Bituminous concrete wearing course including tack coat (RC2)** |  | 2028-03-02 | 2028-03-05 |  |  |  |
| RHD4CZ5L016RD4100 |  | Supply, lay and compaction Asphaltic wearing course including tack Coat (RC2)for Road Network - (RD-L-16)-Z5-L016-RD | 2d | 2028-03-02 | 2028-03-05 | RHD4CZ5L016RD5100, RHD4CZ5L016RD6100 |  | -115.02d |
|  | 3917 | **RHD4-02-002-L016-(RD)-Pavement Marking** |  | 2028-03-05 | 2028-03-13 |  |  |  |
| RHD4CZ5L016RD7100 |  | Pavement Markings for Road Network - (RD-L-16)-Z5-L016-RD | 7d | 2028-03-05 | 2028-03-13 | RHD4CZ5L016RD4100, RHD4PRSHLDOSRD1500, RHD4PRSHLSTAGRD1500 |  | -115.02d |
|  | 3735 | **RHD4-02-002-Z5-L016-Storm Network - ST** |  | 2026-08-04 | 2027-02-14 |  |  |  |
|  | 3754 | **RHD4-02-002-L016-(ST)-MH Works - 2000 mm diameter** |  | 2026-08-04 | 2027-02-01 |  |  |  |
| RHD4CZ5L016ST3102 |  | Excavation and PC Blinding works for MH 2000 mm - (RD-L-16)-Z5-L016-ST | 2d | 2026-08-04 A | 2026-08-13 A | RHD4ENSDZ5APPST110, RHD4ENMSST2000, RHD4ENSDZ5APPRD220, RHD4ENSDZ5APPEW100 SS, RHD4CZ5C051ST3101 | 100% |  |
| RHD4CZ5L016ST3202 |  | Installation of Base for MH 2000 mm - (RD-L-16)-Z5-L016-ST | 2d | 2026-08-31 A | 2026-09-01 A | RHD4CZ5L016ST3102 | 100% |  |
| RHD4CZ5L016ST3302 |  | MH Ring and C.Slab works and Backfilling works for MH 2000 mm - (RD-L-16)-Z5-L016-ST | 2d | 2027-01-26 | 2027-01-27 | RHD4CZ5L016ST3202, RHD4PRSHLDOSST1604 |  | -186d |
| RHD4CZ5L016ST3402 |  | Steel Cover for MH 2000 mm - (RD-L-16)-Z5-L016-ST | 2d | 2027-01-28 | 2027-01-30 | RHD4CZ5L016ST3302 |  | -186d |
| RHD4CZ5L016ST3502 |  | Finishing, Benching, Testing works for MH 2000 mm - (RD-L-16)-Z5-L016-ST | 2d | 2027-01-31 | 2027-02-01 | RHD4CZ5L016ST3402 |  | -186d |
|  | 1852 | **RHD4-02-002-L016-(ST)-GRP Pipes - 1200 mm diameter** |  | 2026-09-29 | 2027-02-07 |  |  |  |
| RHD4CZ5L016ST1108 |  | Excavation works for GRP Pipe Line 1200 mm - (RD-L-16)-Z5-L016-ST | 2d | 2026-09-29 A | 2026-11-02 A | RHD4CZ5A014ST8400, RHD4CZ5L016ST3102 | 100% |  |
| RHD4CZ5L016ST1208 |  | Bedding works for GRP Pipe Line 1200 mm - (RD-L-16)-Z5-L016-ST | 2d | 2026-09-30 A | 2026-11-03 A | RHD4CZ6C062ST1506, RHD4CZ6A015PT1504, RHD4CZ5L07ST3500, RHD4CZ5L016ST1108 | 100% |  |
| RHD4CZ5L016ST1308 |  | Installing for GRP Pipe Line 1200 mm - (RD-L-16)-Z5-L016-ST | 2d | 2026-11-04 A | 2026-11-05 A | RHD4CZ5L016ST1208 | 100% |  |
| RHD4CZ5L016ST1408 |  | Primary Test for GRP Pipe Line 1200 mm - (RD-L-16)-Z5-L016-ST | 2d | 2027-02-02 | 2027-02-04 | RHD4CZ6A02ST3500, RHD4PRSHLSTAGTC1000, RHD4CZ5L016ST1308 |  | -197.02d |
| RHD4CZ5L016ST1508 |  | Backfilling and warning tape works for GRP Pipe Line 1200 mm - (RD-L-16)-Z5-L016-ST | 2d | 2027-02-04 | 2027-02-07 | RHD4CZ5L016ST1408 |  | -197.02d |
|  | 3749 | **RHD4-02-002-L016-(ST)-GRP Pipes - 1800 mm diameter** |  |  |  |  |  |  |
|  | 1844 | **RHD4-02-002-L016-(ST)-GRP Pipes - 400 mm diameter** |  | 2026-08-04 | 2027-02-07 |  |  |  |
| RHD4CZ5L016ST1100 |  | Excavation works for GRP Pipe Line 400 mm - (RD-L-16)-Z5-L016-ST | 2d | 2026-08-04 A | 2026-08-05 A | RHD4CZ5L016ST1104 FF, RHD4CZ5L016ST1104 | 100% |  |
| RHD4CZ5L016ST1200 |  | Bedding works for GRP Pipe Line 400 mm - (RD-L-16)-Z5-L016-ST | 2d | 2026-08-06 A | 2026-08-08 A | RHD4CZ5L016ST1100, RHD4CZ5L016ST1204 | 100% |  |
| RHD4CZ5L016ST1300 |  | Installing for GRP Pipe Line 400 mm - (RD-L-16)-Z5-L016-ST | 2d | 2026-08-09 A | 2026-08-10 A | RHD4CZ5L016ST1200, RHD4CZ5L016ST1304 | 100% |  |
| RHD4CZ5L016ST1500 |  | Backfilling and warning tape works for GRP Pipe Line 400 mm - (RD-L-16)-Z5-L016-ST | 2d | 2026-09-19 A | 2026-09-20 A | RHD4CZ5L016ST1400, RHD4CZ5L016ST1504 | 100% |  |
| RHD4CZ5L016ST1400 |  | Primary Test for GRP Pipe Line 400 mm - (RD-L-16)-Z5-L016-ST | 2d | 2027-02-04 | 2027-02-07 | RHD4CZ5L016ST1300, RHD4CZ5L016ST1404 |  | -180.02d |
|  | 1848 | **RHD4-02-002-L016-(ST)-GRP Pipes - 800 mm diameter** |  | 2026-08-04 | 2027-02-04 |  |  |  |
| RHD4CZ5L016ST1104 |  | Excavation works for GRP Pipe Line 800 mm - (RD-L-16)-Z5-L016-ST | 2d | 2026-08-04 A | 2026-08-05 A | RHD4CZ5L016ST1106 | 100% |  |
| RHD4CZ5L016ST1204 |  | Bedding works for GRP Pipe Line 800 mm - (RD-L-16)-Z5-L016-ST | 2d | 2026-08-06 A | 2026-08-08 A | RHD4CZ5L016ST1104 | 100% |  |
| RHD4CZ5L016ST1304 |  | Installing for GRP Pipe Line 800 mm - (RD-L-16)-Z5-L016-ST | 2d | 2026-08-09 A | 2026-08-10 A | RHD4CZ5L016ST1204 | 100% |  |
| RHD4CZ5L016ST1504 |  | Backfilling and warning tape works for GRP Pipe Line 800 mm - (RD-L-16)-Z5-L016-ST | 2d | 2026-09-19 A | 2026-09-20 A | RHD4CZ5L016ST1506, RHD4CZ5L016ST1404 | 100% |  |
| RHD4CZ5L016ST1404 |  | Primary Test for GRP Pipe Line 800 mm - (RD-L-16)-Z5-L016-ST | 2d | 2027-02-02 | 2027-02-04 | RHD4CZ5L016ST1304 |  | -180.02d |
|  | 2039 | **RHD4-02-002-L016-(ST)-GRP Pipes - 1000 mm diameter** |  | 2026-08-04 | 2027-02-04 |  |  |  |
| RHD4CZ5L016ST1106 |  | Excavation works for GRP Pipe Line 1000 mm - (RD-L-16)-Z5-L016-ST | 2d | 2026-08-04 A | 2026-08-05 A | RHD4CZ5L016ST1108 | 100% |  |
| RHD4CZ5L016ST1206 |  | Bedding works for GRP Pipe Line 1000 mm - (RD-L-16)-Z5-L016-ST | 2d | 2026-08-06 A | 2026-08-08 A | RHD4CZ5L016ST1106 | 100% |  |
| RHD4CZ5L016ST1306 |  | Installing for GRP Pipe Line 1000 mm - (RD-L-16)-Z5-L016-ST | 2d | 2026-08-09 A | 2026-08-10 A | RHD4CZ5L016ST1206 | 100% |  |
| RHD4CZ5L016ST1506 |  | Backfilling and warning tape works for GRP Pipe Line 1000 mm - (RD-L-16)-Z5-L016-ST | 2d | 2026-09-26 A | 2026-09-27 A | RHD4CZ5L016ST1508, RHD4CZ5L016ST1406 | 100% |  |
| RHD4CZ5L016ST1406 |  | Primary Test for GRP Pipe Line 1000 mm - (RD-L-16)-Z5-L016-ST | 2d | 2027-02-02 | 2027-02-04 | RHD4CZ5L016ST1306 |  | -178.02d |
|  | 2414 | **RHD4-02-002-L016-(ST)-GRP Pipes - 600 mm diameter** |  | 2026-08-04 | 2027-02-04 |  |  |  |
| RHD4CZ5L016ST1102 |  | Excavation works for GRP Pipe Line 600 mm - (RD-L-16)-Z5-L016-ST | 2d | 2026-08-04 A | 2026-08-05 A | RHD4CZ5L016ST1100 | 100% |  |
| RHD4CZ5L016ST1202 |  | Bedding works for GRP Pipe Line 600 mm - (RD-L-16)-Z5-L016-ST | 2d | 2026-08-06 A | 2026-08-08 A | RHD4CZ5L016ST1102 | 100% |  |
| RHD4CZ5L016ST1302 |  | Installing for GRP Pipe Line 600 mm - (RD-L-16)-Z5-L016-ST | 2d | 2026-08-09 A | 2026-08-10 A | RHD4CZ5L016ST1202 | 100% |  |
| RHD4CZ5L016ST1502 |  | Backfilling and warning tape works for GRP Pipe Line 600 mm - (RD-L-16)-Z5-L016-ST | 2d | 2026-09-19 A | 2026-09-20 A | RHD4CZ5L016ST1402 | 100% |  |

| ID | WBS | Task | Duration | Start | Finish | Predecessors | Complete | Total float |
| --- | --- | --- | --- | --- | --- | --- | --- | --- |
| RHD4CZ5L016ST1402 |  | Primary Test for GRP Pipe Line 600 mm - (RD-L-16)-Z5-L016-ST | 2d | 2027-02-02 | 2027-02-04 | RHD4CZ5L016ST1302 |  | -158.02d |
|  | 6393 | **RHD4-02-002-L016-(ST)-GRP Pipes - 1300 mm diameter** |  | 2027-02-02 | 2027-02-14 |  |  |  |
| RHD4CZ5L016ST1109 |  | Excavation works for GRP Pipe Line 1300 mm - (RD-L-16)-Z5-L016-ST | 2d | 2027-02-02 | 2027-02-04 | RHD4CZ5L016ST1102 |  | -166.02d |
| RHD4CZ5L016ST1209 |  | Bedding works for GRP Pipe Line 1300 mm - (RD-L-16)-Z5-L016-ST | 2d | 2027-02-04 | 2027-02-07 | RHD4CZ5L016ST1109 |  | -166.02d |
| RHD4CZ5L016ST1309 |  | Installing for GRP Pipe Line 1300 mm - (RD-L-16)-Z5-L016-ST | 2d | 2027-02-07 | 2027-02-09 | RHD4CZ5L016ST1209 |  | -166.02d |
| RHD4CZ5L016ST1409 |  | Primary Test for GRP Pipe Line 1300 mm - (RD-L-16)-Z5-L016-ST | 2d | 2027-02-09 | 2027-02-11 | RHD4CZ5L016ST1309 |  | -166.02d |
| RHD4CZ5L016ST1509 |  | Backfilling and warning tape works for GRP Pipe Line 1300 mm - (RD-L-16)-Z5-L016-ST | 2d | 2027-02-11 | 2027-02-14 | RHD4CZ5L016ST1409 |  | -166.02d |
|  | 3753 | **RHD4-02-002-L016-(ST)-MH Works - 1500 mm diameter** |  | 2026-08-04 | 2027-02-03 |  |  |  |
| RHD4CZ5L016ST3101 |  | Excavation and PC Blinding works for MH 1500 mm - (RD-L-16)-Z5-L016-ST | 2d | 2026-08-04 A | 2026-08-06 A | RHD4CZ5L016ST3102, RHD4ENSDZ5APPST110, RHD4ENMSST2000 | 100% |  |
| RHD4CZ5L016ST3201 |  | Installation of Base for MH 1500 mm - (RD-L-16)-Z5-L016-ST | 2d | 2026-08-06 A | 2026-08-15 A | RHD4CZ5L016ST3101 | 100% |  |
| RHD4CZ5L016ST3301 |  | MH Ring and C.Slab works and Backfilling works for MH 1500 mm - (RD-L-16)-Z5-L016-ST | 2d | 2026-10-24 A | 2027-01-27 | RHD4CZ5L016ST3201 | 19% | -184d |
| RHD4CZ5L016ST3401 |  | Steel Cover for MH 1500 mm - (RD-L-16)-Z5-L016-ST | 2d | 2027-01-31 | 2027-02-01 | RHD4CZ5L016ST3301, RHD4CZ5L016ST3402 |  | -186d |
| RHD4CZ5L016ST3501 |  | Finishing, Benching, Testing works for MH 1500 mm - (RD-L-16)-Z5-L016-ST | 2d | 2027-02-02 | 2027-02-03 | RHD4CZ5L016ST3401, RHD4CZ5L016ST3502 |  | -186d |
|  | 3752 | **RHD4-02-002-L016-(ST)-MH Works - 1200 mm diameter** |  | 2026-08-04 | 2027-02-06 |  |  |  |
| RHD4CZ5L016ST3100 |  | Excavation and PC Blinding works for MH 1200 mm - (RD-L-16)-Z5-L016-ST | 2d | 2026-08-04 A | 2026-08-06 A | RHD4CZ5L016ST3101, RHD4ENSDZ5APPST110, RHD4ENMSST2000, RHD4ENMSST2010, RHD4ENMSEW2000, RHD4ENMSEW2010, RHD4ENSDZ5APPEW100 SS, RHD4ENSDZ7APPEW100 SS, RHD4ENSDZ8APPEW100 SS | 100% |  |
| RHD4CZ5L016ST3200 |  | Installation of Base for MH 1200 mm - (RD-L-16)-Z5-L016-ST | 2d | 2027-01-26 | 2027-01-27 | RHD4CZ5L016ST3100, RHD4PRSHLSTAGST1604 |  | -152d |
| RHD4CZ5L016ST3300 |  | MH Ring and C.Slab works and Backfilling works for MH 1200 mm - (RD-L-16)-Z5-L016-ST | 2d | 2027-01-28 | 2027-01-30 | RHD4CZ5L016ST3200, RHD4PRSHLDOSST1604 |  | -152d |
| RHD4CZ5L016ST3400 |  | Steel Cover for MH 1200 mm - (RD-L-16)-Z5-L016-ST | 2d | 2027-02-02 | 2027-02-03 | RHD4CZ5L016ST3300, RHD4CZ5L016ST3401 |  | -154d |
| RHD4CZ5L016ST3500 |  | Finishing, Benching, Testing works for MH 1200 mm - (RD-L-16)-Z5-L016-ST | 2d | 2027-02-04 | 2027-02-06 | RHD4CZ5L016ST3400 |  | -154d |
|  | 3747 | **RHD4-02-002-L016-(ST)-GRP Pipes - 1500 mm diameter** |  |  |  |  |  |  |
|  | 3743 | **RHD4-02-002-L016-(ST)-GRP Pipes - 1100 mm diameter** |  |  |  |  |  |  |
|  | 3739 | **RHD4-02-002-L016-(ST)-GRP Pipes - 700 mm diameter** |  | 2026-08-04 | 2027-02-02 |  |  |  |
| RHD4CZ5L016ST1103 |  | Excavation works for GRP Pipe Line 700 mm - (RD-L-16)-Z5-L016-ST | 2d | 2026-08-04 A | 2027-01-27 | RHD4ENSDZ5APPST110, RHD4CZ5C051ST3101 | 80% | -192d |
| RHD4CZ5L016ST1203 |  | Bedding works for GRP Pipe Line 700 mm - (RD-L-16)-Z5-L016-ST | 2d | 2026-08-06 A | 2027-01-28 | RHD4CZ5L016ST1103 | 80% | -192d |
| RHD4CZ5L016ST1303 |  | Installing for GRP Pipe Line 700 mm - (RD-L-16)-Z5-L016-ST | 2d | 2026-08-09 A | 2027-01-30 | RHD4CZ5L016ST1203, RHD4PRSHLSTAGST1004, RHD4PRSHLDOSST1604, RHD4PRSHLPOST1000, RHD4PRSHLDOSST1004 | 80% | -192d |
| RHD4CZ5L016ST1503 |  | Backfilling and warning tape works for GRP Pipe Line 700 mm - (RD-L-16)-Z5-L016-ST | 2d | 2026-08-11 A | 2027-02-02 | RHD4CZ5L016ST1403 | 80% | -192d |
| RHD4CZ5L016ST1403 |  | Primary Test for GRP Pipe Line 700 mm - (RD-L-16)-Z5-L016-ST | 2d | 2027-01-31 | 2027-02-01 | RHD4CZ5L016ST1303 |  | -192d |
|  | 3737 | **RHD4-02-002-L016-(ST)-GRP Pipes - 500 mm diameter** |  |  |  |  |  |  |
|  | 3750 | **RHD4-02-002-L016-(ST)-UPVC Pipes - 300 mm diameter** |  | 2026-08-04 | 2027-02-06 |  |  |  |
| RHD4CZ5L016ST2100 |  | Excavation works for UPVC Pipe Line 300 mm - (RD-L-16)-Z5-L016-ST | 2d | 2026-08-04 A | 2027-01-28 | RHD4ENSDZ5APPST110, RHD4CZ5L016ST1103 | 75% | -188d |
| RHD4CZ5L016ST2200 |  | Bedding works for UPVC Pipe Line 300 mm - (RD-L-16)-Z5-L016-ST | 2d | 2026-08-06 A | 2027-01-30 | RHD4CZ5L016ST2100 | 64% | -188d |
| RHD4CZ5L016ST2300 |  | Installing for UPVC Pipe Line 300 mm - (RD-L-16)-Z5-L016-ST | 2d | 2026-09-19 A | 2027-02-01 | RHD4CZ5L016ST2200, RHD4PRSHLDOSST1104, RHD4PRSHLSTAGST1104 | 64% | -188d |
| RHD4CZ5L016ST2500 |  | Backfilling and warning tape works for UPVC Pipe Line 300 mm - (RD-L-16)-Z5-L016-ST | 2d | 2026-09-21 A | 2027-02-06 | RHD4CZ5L016ST2400, RHD4CZ5L016ST6100 | 52% | -188d |
| RHD4CZ5L016ST2400 |  | Primary Test for UPVC Pipe Line 300 mm - (RD-L-16)-Z5-L016-ST | 2d | 2027-02-02 | 2027-02-03 | RHD4CZ5L016ST2300 |  | -188d |
|  | 3758 | **RHD4-02-002-L016-(ST)-Concrete Encasement** |  | 2027-01-31 | 2027-02-01 |  |  |  |
| RHD4CZ5L016ST6100 |  | Pipe Encasement for Storm Pipelines - (RD-L-16)-Z5-L016-ST | 2d | 2027-01-31 | 2027-02-01 | RHD4CZ5L016ST2300 SS, RHD4CZ5L016ST2300 FF, RHD4CZ5L016ST2200 |  | -186d |
|  | 3759 | **RHD4-02-002-Z5-L016-Catch Basin - ST** |  | 2026-08-04 | 2027-02-10 |  |  |  |
|  | 6409 | **RHD4-02-002-L016-(ST)-Double Catch Basin Works** |  | 2026-08-04 | 2027-02-04 |  |  |  |
| RHD4CZ5L016ST8100 |  | Excavation works for Double Catch Basin - (RD-L-16)-Z5-L016-ST | 2d | 2026-08-04 A | 2026-08-06 A | RHD4CZ5L016ST2100 | 100% |  |
| RHD4CZ5L016ST8200 |  | PC Blinding, Installation and Pipe connection for Double Catch Basin - (RD-L-16)-Z5-L016-ST | 2d | 2026-09-22 A | 2026-09-24 A | RHD4CZ5L016ST8100 | 100% |  |
| RHD4CZ5L016ST8300 |  | Rings & C.Slab & Final Backfillfor Double Catch Basin - (RD-L-16)-Z5-L016-ST | 2d | 2027-01-30 | 2027-01-31 | RHD4CZ5L016ST8200 |  | -185d |
| RHD4CZ5L016ST8400 |  | Steel Cover for Double Catch Basin - (RD-L-16)-Z5-L016-ST | 2d | 2027-02-01 | 2027-02-02 | RHD4CZ5L016ST8300 |  | -185d |
| RHD4CZ5L016ST8500 |  | Finishing and Insulation works for Double Catch Basin - (RD-L-16)-Z5-L016-ST | 2d | 2027-02-03 | 2027-02-04 | RHD4CZ5L016ST8400 |  | -185d |
|  | 3760 | **RHD4-02-002-L016-(ST)-Single Catch Basin Works** |  | 2026-08-04 | 2027-02-10 |  |  |  |
| RHD4CZ5L016ST7100 |  | Excavation works for Single Catch Basin - (RD-L-16)-Z5-L016-ST | 2d | 2026-08-04 A | 2026-09-26 A | RHD4CZ5L016ST3300, RHD4CZ5L016ST3301, RHD4ENSDZ5APPST110 | 100% |  |
| RHD4CZ5L016ST7200 |  | PC Blinding, Installation and Pipe connection for Single Catch Basin - (RD-L-16)-Z5-L016-ST | 2d | 2026-09-21 A | 2026-09-28 A | RHD4CZ5L016ST7100 | 100% |  |
| RHD4CZ5L016ST7300 |  | Rings & C.Slab & Final Backfill for Single Catch Basin - (RD-L-16)-Z5-L016-ST | 2d | 2026-10-27 A | 2027-02-01 | RHD4CZ5L016ST7200 |  | -152d |
| RHD4CZ5L016ST7400 |  | Steel Cover for Single Catch Basin - (RD-L-16)-Z5-L016-ST | 2d | 2027-02-04 | 2027-02-06 | RHD4CZ5L016ST7300, RHD4PRSHLDOSST1704, RHD4CZ5L016ST3400 |  | -154d |
| RHD4CZ5L016ST7500 |  | Finishing and Insulation works for Single Catch Basin - (RD-L-16)-Z5-L016-ST | 3d | 2027-02-07 | 2027-02-10 | RHD4CZ5L016ST7400, RHD4CZ5L016ST3500, RHD4CZ5L016ST1500 |  | -154.02d |
|  | 4299 | **RHD4-02-002-Z5-L016-Concrete Box Culvert - ST** |  | 2026-06-11 | 2027-01-30 |  |  |  |
|  | 4300 | **RHD4-02-002-L016-(ST)-Concrete Box Culvert** |  | 2026-06-11 | 2027-01-30 |  |  |  |
| RHD4CZ5L016ST4100 |  | Excavation works for Box Culvert - (RD-L-16)-Z5-C016-ST(Completed) | 46d | 2026-06-11 A | 2026-08-03 A | RHD4PRSHLDOSST1003 SS, RHD4ENMSTUN2000 | 100% |  |
| RHD4CZ5L016ST4200 |  | PC works for Box Culvert - (RD-L-16)-Z5-C016-ST(Completed) | 43d | 2026-06-15 A | 2026-06-16 A | RHD4CZ5L016ST4100 SS | 100% |  |
| RHD4CZ5L016ST4400 |  | Raft works for Box Culvert - (RD-L-16)-Z5-C016-ST(Completed) | 21d | 2026-07-11 A | 2026-07-16 A | RHD4CZ5L016ST4200 SS, RHD4CZ5L08RW3000 | 100% |  |
| RHD4CZ5L016ST4500 |  | Wall and slab works for Box Culvert - (RD-L-16)-Z5-C016-ST | 2d | 2026-08-04 A | 2026-09-20 A | RHD4CZ5L016ST4400, RHD4CZ5L016ST4200, RHD4ENMSTUN2000, RHD4CZ5L016ST4100 | 100% |  |
| RHD4CZ5L016ST4600 |  | Insulation and Testing for Box Culvert - (RD-L-16)-Z5-C016-ST | 2d | 2026-10-01 A | 2026-10-03 A | RHD4CZ5L016ST4700, RHD4CZ5L016ST5400 | 100% |  |
| RHD4CZ5L016ST4700 |  | Backfilling works for Box Culvert - (RD-L-16)-Z5-C016-ST | 4d | 2027-01-26 | 2027-01-30 | RHD4CZ5L016ST4500, RHD4CZ5L016ST5300 |  | -154d |
|  | 4301 | **RHD4-02-002-L016-(ST)-Concrete Chambers** |  | 2026-08-20 | 2027-01-27 |  |  |  |
| RHD4CZ5L016ST5100 |  | Excavation and Bedding for Concrete Chambers - for Box Culvert - (RD-L-16)-Z5-C016-ST | 2d | 2026-08-20 A | 2027-01-20 | RHD4CZ5L016ST4500 | 50% | -154d |
| RHD4CZ5L016ST5200 |  | PC works for Concrete Chambers - for Box Culvert - (RD-L-16)-Z5-C016-ST | 2d | 2026-08-25 A | 2027-01-23 | RHD4CZ5L016ST5100 | 50% | -154d |
| RHD4CZ5L016ST5300 |  | Installation for Concrete Chambers - for Box Culvert - (RD-L-16)-Z5-C016-ST | 2d | 2026-08-30 A | 2027-01-25 | RHD4CZ5L016ST5200 | 50% | -154d |
| RHD4CZ5L016ST5400 |  | Backfilling works for Concrete Chambers - for Box Culvert - (RD-L-16)-Z5-C016-ST | 2d | 2027-01-26 | 2027-01-27 | RHD4CZ5L016ST5300 |  | -152d |
|  | 3784 | **RHD4-02-002-Z5-L016-Sewage Network - SW** |  | 2026-08-10 | 2027-06-01 |  |  |  |
|  | 1 | **Missing ID** |  | 2027-04-12 | 2027-04-23 |  |  |  |
| RHD4CZ5L016SW4101 |  | Excavation and Bedding for Air Valve Chamber for HDPE force Main - (RD-L-16)-Z5-L016-SW | 2d | 2027-04-12 | 2027-04-13 | RHD4CZ5L016SW3101 SS, RHD4CZ5L016RD2100 |  | -175d |
| RHD4CZ5L016SW4201 |  | PC works for Air Valve Chamber for HDPE force Main - (RD-L-16)-Z5-L016-SW | 2d | 2027-04-14 | 2027-04-15 | RHD4CZ5L016SW4101 |  | -175d |
| RHD4CZ5L016SW4301 |  | Installation for Air Valve Chamber for HDPE force Main - (RD-L-16)-Z5-L016-SW | 2d | 2027-04-16 | 2027-04-17 | RHD4CZ5L016SW4201 |  | -175d |
| RHD4CZ5L016SW4401 |  | Backfilling works for Air Valve Chamber for HDPE force Main - (RD-L-16)-Z5-L016-SW | 2d | 2027-04-18 | 2027-04-19 | RHD4CZ5L016SW4301 |  | -175d |
| RHD4CZ5L016SW5101 |  | Installation for Air Valves for HDPE force Main - (RD-L-16)-Z5-L016-SW | 2d | 2027-04-20 | 2027-04-21 | RHD4CZ5L016SW4401 |  | -175d |
| RHD4CZ5L016SW5201 |  | Stem and Service box for Air Valves for HDPE force Main - (RD-L-16)-Z5-L016-SW | 2d | 2027-04-22 | 2027-04-23 | RHD4CZ5L016SW5101, RHD4CZ5L016ST4600 |  | -175d |

| ID | WBS | Task | Duration | Start | Finish | Predecessors | Complete | Total float |
| --- | --- | --- | --- | --- | --- | --- | --- | --- |
|  | 957 | **RHD4-02-002-L016-(SW)-MH Works - 1200 mm diameter with Back drop** |  | 2026-08-10 | 2027-04-18 |  |  |  |
| RHD4CZ5L016SW3101 |  | Excavation and PC Blinding works for MH 1200 mm - (RD-L-16)-Z5-L016-SW | 2d | 2026-08-10 A | 2026-08-11 A | RHD4CZ5L08ST5400, RHD4CZ5L016ST7100, RHD4CZ7C013IRR3200 | 100% |  |
| RHD4CZ5L016SW3201 |  | Installation of Base for MH 1200 mm - (RD-L-16)-Z5-L016-SW | 2d | 2026-08-12 A | 2026-08-13 A | RHD4CZ5L016SW3101 | 100% |  |
| RHD4CZ5L016SW3301 |  | MH Ring and C.Slab works and Backfilling works for MH 1200 mm - (RD-L-16)-Z5-L016-SW | 2d | 2027-04-12 | 2027-04-13 | RHD4CZ5L016SW3201 |  | -177d |
| RHD4CZ5L016SW3401 |  | Steel Cover for MH 1200 mm - (RD-L-16)-Z5-L016-SW | 2d | 2027-04-14 | 2027-04-15 | RHD4CZ5L016SW3301 |  | -177d |
| RHD4CZ5L016SW3501 |  | Finishing, Benching, Testing works for MH 1200 mm - (RD-L-16)-Z5-L016-SW | 2d | 2027-04-17 | 2027-04-18 | RHD4CZ5L016SW3401 |  | -177d |
|  | 4358 | **RHD4-02-002-L016-(SW)-HDPE Pipes - 250 mm diameter** |  | 2027-04-12 | 2027-04-22 |  |  |  |
| RHD4CZ5L016SW2600 |  | Excavation works for HDPE Force Main Pipeline 250 mm - (RD-L-16)-Z5-L016-SW | 2d | 2027-04-12 | 2027-04-13 | RHD4CZ5L016SW3101, RHD4CZ7C02ST5400 |  | -179d |
| RHD4CZ5L016SW2700 |  | Bedding works for HDPE Force Main Pipeline 250 mm - (RD-L-16)-Z5-L016-SW | 2d | 2027-04-14 | 2027-04-15 | RHD4CZ5L016SW2600 |  | -179d |
| RHD4CZ5L016SW2800 |  | Installing for HDPE Force Main Pipeline 250 mm - (RD-L-16)-Z5-L016-SW | 2d | 2027-04-17 | 2027-04-18 | RHD4CZ5L016SW2700 |  | -179d |
| RHD4CZ5L016SW2900 |  | Primary Test for HDPE Force Main Pipeline 250 mm - (RD-L-16)-Z5-L016-SW | 2d | 2027-04-19 | 2027-04-20 | RHD4CZ5L016SW2800 |  | -179d |
| RHD4CZ5L016SW3000 |  | Backfilling and warning tape works for HDPE Force Main Pipeline 250 mm - (RD-L-16)-Z5-L016-SW | 2d | 2027-04-21 | 2027-04-22 | RHD4CZ5L016SW3301, RHD4CZ5L016SW2900 |  | -179d |
|  | 3794 | **RHD4-02-002-L016-(SW)-MH Works - 1200 mm diameter** |  | 2026-08-11 | 2027-06-01 |  |  |  |
| RHD4CZ5L016SW3100 |  | Excavation and PC Blinding works for MH 1200 mm - (RD-L-16)-Z5-L016-SW | 8d | 2026-08-11 A | 2027-04-15 | RHD4ENSDZ5APPSW120, RHD4CZ5L016SW2600 | 75% | -162d |
| RHD4CZ5L016SW3200 |  | Installation of Base for MH 1200 mm - (RD-L-16)-Z5-L016-SW | 12d | 2026-08-12 A | 2027-04-22 | RHD4CZ5L016SW3100 | 50% | -162d |
| RHD4CZ5L016SW3300 |  | MH Ring and C.Slab works and Backfilling works for MH 1200 mm - (RD-L-16)-Z5-L016-SW | 12d | 2027-04-24 | 2027-05-06 | RHD4CZ5L016SW3200 |  | -162d |
| RHD4CZ5L016SW3400 |  | Steel Cover for MH 1200 mm - (RD-L-16)-Z5-L016-SW | 6d | 2027-05-08 | 2027-05-13 | RHD4CZ5L016SW3300 |  | -159d |
| RHD4CZ5L016SW3500 |  | Finishing, Benching, Testing works for MH 1200 mm - (RD-L-16)-Z5-L016-SW | 12d | 2027-05-19 | 2027-06-01 | RHD4CZ5L016SW3400 |  | -159d |
|  | 3785 | **RHD4-02-002-L016-(SW)-GRP Pipes - 300 mm diameter** |  | 2027-04-24 | 2027-05-22 |  |  |  |
| RHD4CZ5L016SW1100 |  | Excavation works for GRP Pipe Line 300 mm - (RD-L-16)-Z5-L016-SW | 2d | 2027-04-24 | 2027-04-25 | RHD4CZ5L016SW3200, RHD4ENSDZ5APPSW120, RHD4CZ5L016SW3100 |  | -154d |
| RHD4CZ5L016SW1200 |  | Bedding works for GRP Pipe Line 300 mm - (RD-L-16)-Z5-L016-SW | 2d | 2027-04-26 | 2027-04-27 | RHD4CZ5L016SW1100 |  | -154d |
| RHD4CZ5L016SW1300 |  | Installing for GRP Pipe Line 300 mm - (RD-L-16)-Z5-L016-SW | 2d | 2027-05-08 | 2027-05-09 | RHD4CZ5L016SW1200, RHD4CZ5L016SW3300 |  | -162d |
| RHD4CZ5L016SW1400 |  | Primary Test for GRP Pipe Line 300 mm - (RD-L-16)-Z5-L016-SW | 2d | 2027-05-10 | 2027-05-11 | RHD4CZ5L016SW1300 |  | -162d |
| RHD4CZ5L016SW1500 |  | Backfilling and warning tape works for GRP Pipe Line 300 mm - (RD-L-16)-Z5-L016-SW | 5d | 2027-05-12 | 2027-05-22 | RHD4CZ5L016SW1400, RHD4CZ4L014ST3501, RHD4CZ4C031ST7500 |  | -162d |
|  | 3790 | **RHD4-02-002-L016-(SW)-UPVC Pipes - 200 mm diameter** |  | 2026-08-12 | 2027-05-19 |  |  |  |
| RHD4CZ5L016SW2100 |  | Excavation works for UPVC Pipe Line 200 mm - (RD-L-16)-Z5-L016-SW | 4d | 2026-08-12 A | 2026-09-16 A | RHD4CZ5L016SW1100, RHD4ENSDZ5APPSW120, RHD4CZ5L016SW1100 FF | 100% |  |
| RHD4CZ5L016SW2200 |  | Bedding works for UPVC Pipe Line 200 mm - (RD-L-16)-Z5-L016-SW | 4d | 2026-08-15 A | 2026-09-19 A | RHD4CZ5L016SW2100, RHD4CZ5L016SW1200 | 100% |  |
| RHD4CZ5L016SW2300 |  | Installing for UPVC Pipe Line 200 mm - (RD-L-16)-Z5-L016-SW | 4d | 2026-08-16 A | 2026-09-21 A | RHD4CZ5L016SW2200, RHD4CZ5L016SW1300 | 100% |  |
| RHD4CZ5L016SW2500 |  | Backfilling and warning tape works for UPVC Pipe Line 200 mm - (RD-L-16)-Z5-L016-SW | 4d | 2026-08-18 A | 2026-08-22 A | RHD4CZ5L016SW2400, RHD4CZ5L016SW1500, RHD4CZ5L08SW3500, RHD4CZ5L08PT3200, RHD4CZ6C052SL6100 | 100% |  |
| RHD4CZ5L016SW2400 |  | Primary Test for UPVC Pipe Line 200 mm - (RD-L-16)-Z5-L016-SW | 3d | 2026-09-17 A | 2027-05-19 | RHD4CZ5L016SW2300, RHD4CZ5L016SW1400 | 8% | -160d |
|  | 3793 | **RHD4-02-002-L016-(SW)-Concrete Encasement** |  |  |  |  |  |  |
|  | 3821 | **RHD4-02-002-Z5-L016-Potable Network - PT** |  | 2026-08-04 | 2027-07-14 |  |  |  |
|  | 3824 | **RHD4-02-002-L016-(PT)-HDPE Pipes - 200 mm diameter** |  | 2027-05-23 | 2027-06-06 |  |  |  |
| RHD4CZ5L016PT1102 |  | Excavation works for HDPE Pipline 200 mm - (RD-L-16)-Z5-L016-PT | 2d | 2027-05-23 | 2027-05-25 | RHD4CZ5L016SW1500, RHD4CZ5L016SW2500, RHD4ENSDZ5APPPT130, RHD4ENMSPT2000, RHD4CZ4L09ST7500, RHD4CZ2C082PT3202, RHD4CZ2L011SL5200, RHD4CZ4C031SL5200 |  | -162.02d |
| RHD4CZ5L016PT1202 |  | Bedding works for HDPE Pipline 200 mm - (RD-L-16)-Z5-L016-PT | 2d | 2027-05-25 | 2027-05-27 | RHD4CZ5L016PT1102 |  | -162.02d |
| RHD4CZ5L016PT1302 |  | Installing for HDPE Pipline 200 mm - (RD-L-16)-Z5-L016-PT | 4d | 2027-05-27 | 2027-06-01 | RHD4CZ5L016PT1202, RHD4PRSHLDOSPT1000, RHD4PRSHLSTAGPT1000 |  | -162.02d |
| RHD4CZ5L016PT1402 |  | Primary Test for HDPE Pipline 200 mm - (RD-L-16)-Z5-L016-PT | 2d | 2027-06-01 | 2027-06-03 | RHD4CZ5L016PT1302 |  | -150.02d |
| RHD4CZ5L016PT1502 |  | Backfilling and warning tape works for HDPE Pipline 200 mm - (RD-L-16)-Z5-L016-PT | 2d | 2027-06-03 | 2027-06-06 | RHD4CZ5L016PT1402 |  | -150.02d |
|  | 3823 | **RHD4-02-002-L016-(PT)-HDPE Pipes - 160 mm diameter** |  | 2027-05-25 | 2027-06-24 |  |  |  |
| RHD4CZ5L016PT1101 |  | Excavation works for HDPE Pipline 160 mm - (RD-L-16)-Z5-L016-PT | 3d | 2027-05-25 | 2027-05-29 | RHD4CZ5L016PT1102, RHD4CZ5L016SW1500, RHD4CZ5L016SW2500, RHD4ENSDZ5APPPT130, RHD4ENMSPT2000, RHD4CZ5L08PT1501 |  | -162.02d |
| RHD4CZ5L016PT1201 |  | Bedding works for HDPE Pipline 160 mm - (RD-L-16)-Z5-L016-PT | 3d | 2027-05-29 | 2027-06-01 | RHD4CZ5L016PT1101, RHD4CZ5L016PT1202, RHD4CZ5L08SW6100 |  | -162.02d |
| RHD4CZ5L016PT1301 |  | Installing for HDPE Pipline 160 mm - (RD-L-16)-Z5-L016-PT | 5d | 2027-06-01 | 2027-06-07 | RHD4CZ5L016PT1201, RHD4CZ5L016PT1302, RHD4PRSHLDOSPT1000, RHD4PRSHLSTAGPT1000 |  | -162.02d |
| RHD4CZ5L016PT1401 |  | Primary Test for HDPE Pipline 160 mm - (RD-L-16)-Z5-L016-PT | 2d | 2027-06-17 | 2027-06-20 | RHD4CZ5L016PT1301, RHD4CZ5L016PT1402, RHD4CZ5L016PT5100, RHD4CZ5L08IRR1502, RHD4CZ5L08IRR3200, RHD4CZ5C061SL2400 |  | -162.02d |
| RHD4CZ5L016PT1501 |  | Backfilling and warning tape works for HDPE Pipline 160 mm - (RD-L-16)-Z5-L016-PT | 4d | 2027-06-20 | 2027-06-24 | RHD4CZ5L016PT1401, RHD4CZ5L016PT1502 |  | -162.02d |
|  | 3822 | **RHD4-02-002-L016-(PT)-HDPE Pipes - 110 mm diameter** |  | 2026-08-04 | 2027-06-27 |  |  |  |
| RHD4CZ5L016PT1100 |  | Excavation works for HDPE Pipline 110 mm - (RD-L-16)-Z5-L016-PT | 2d | 2026-08-04 A | 2027-05-31 | RHD4CZ5L016PT1101, RHD4CZ5L016SW1500, RHD4CZ5L016SW2500, RHD4ENSDZ5APPPT130, RHD4ENMSPT2000 | 66% | -162.02d |
| RHD4CZ5L016PT1200 |  | Bedding works for HDPE Pipline 110 mm - (RD-L-16)-Z5-L016-PT | 2d | 2026-08-06 A | 2027-06-03 | RHD4CZ5L016PT1100, RHD4CZ5L016PT1201 | 66% | -159.02d |
| RHD4CZ5L016PT1300 |  | Installing for HDPE Pipline 110 mm - (RD-L-16)-Z5-L016-PT | 2d | 2026-08-08 A | 2027-06-09 | RHD4CZ5L016PT1200, RHD4CZ5L016PT1301, RHD4PRSHLDOSPT1000, RHD4PRSHLSTAGPT1000, RHD4CZ1C081IRR3203 | 66% | -162.02d |
| RHD4CZ5L016PT1400 |  | Primary Test for HDPE Pipline 110 mm - (RD-L-16)-Z5-L016-PT | 4d | 2027-06-20 | 2027-06-24 | RHD4CZ5L016PT1300, RHD4CZ5L016PT1401, RHD4CZ5L016PT5100 |  | -162.02d |
| RHD4CZ5L016PT1500 |  | Backfilling and warning tape works for HDPE Pipline 110 mm - (RD-L-16)-Z5-L016-PT | 2d | 2027-06-24 | 2027-06-27 | RHD4CZ5L016PT1400, RHD4CZ5L016PT1501 |  | -162.02d |
|  | 3827 | **RHD4-02-002-L016-(PT)-Gate Valves (Direct Buried)** |  | 2027-06-07 | 2027-06-30 |  |  |  |
| RHD4CZ5L016PT3100 |  | Installation for Direct Buried Gate Valves - (RD-L-16)-Z5-L016-PT | 3d | 2027-06-07 | 2027-06-10 | RHD4CZ5L016PT1302 FF, RHD4CZ5L016PT1301 FF, RHD4CZ5L016PT1300 FF, RHD4CZ5L016PT1302 SS, RHD4CZ5L016PT1301 SS, RHD4CZ5L016PT1300 SS, RHD4PRSHLDOSPT1200, RHD4PRSHLSTAGPT1200 |  | -148.02d |
| RHD4CZ5L016PT3200 |  | Stem and Service box for Direct Buried Gate Valves - (RD-L-16)-Z5-L016-PT | 3d | 2027-06-27 | 2027-06-30 | RHD4CZ5L016PT3100, RHD4CZ5L016PT1502, RHD4CZ5L016PT1501, RHD4CZ5L016PT1500 |  | -162.02d |
|  | 3830 | **RHD4-02-002-L016-(PT)-Wash out Valve Chambers** |  | 2027-06-06 | 2027-07-07 |  |  |  |
| RHD4CZ5L016PT2101 |  | Excavation and Bedding for Wash out Valve Chambers for Potable Water Network - (RD-L-16)-Z5-L016-PT | 2d | 2027-06-06 | 2027-06-08 | RHD4CZ5L016PT1502, RHD4ENSDZ5APPPT130 |  | -143.02d |
| RHD4CZ5L016PT2201 |  | PC works for Wash out Valve Chambers for Potable Water Network - (RD-L-16)-Z5-L016-PT | 2d | 2027-06-30 | 2027-07-03 | RHD4CZ5L016PT2101, RHD4CZ5L016PT3200 |  | -162.02d |
| RHD4CZ5L016PT2301 |  | Installation for Wash out Valve Chambers for Potable Water Network - (RD-L-16)-Z5-L016-PT | 2d | 2027-07-03 | 2027-07-05 | RHD4CZ5L016PT2201, RHD4PRSHLDOSPT1100, RHD4PRSHLDOSPT1400, RHD4PRSHLSTAGPT1100, RHD4PRSHLSTAGPT1400 |  | -162.02d |
| RHD4CZ5L016PT2401 |  | Backfilling works for Wash out Valve Chambers for Potable Water Network - (RD-L-16)-Z5-L016-PT | 2d | 2027-07-05 | 2027-07-07 | RHD4CZ5L016PT2301 |  | -162.02d |
|  | 3831 | **RHD4-02-002-L016-(PT)-Wash out Valves** |  | 2027-06-08 | 2027-07-10 |  |  |  |
| RHD4CZ5L016PT3102 |  | Installation for Wash out Valves for Potable Water Network - (RD-L-16)-Z5-L016-PT | 2d | 2027-06-08 | 2027-06-10 | RHD4PRSHLDOSPT1200, RHD4PRSHLSTAGPT1200, RHD4CZ5L016PT2101 |  | -139.02d |
| RHD4CZ5L016PT3202 |  | Stem and Service box for Wash out Valves for Potable Water Network - (RD-L-16)-Z5-L016-PT | 2d | 2027-07-07 | 2027-07-10 | RHD4CZ5L016PT3102, RHD4CZ5L016PT2401, RHD4PRSHLDOSPT1300, RHD4PRSHLSTAGPT1300 |  | -162.02d |
|  | 3834 | **RHD4-02-002-L016-(PT)-Fire Hydrant** |  | 2027-06-27 | 2027-07-14 |  |  |  |
| RHD4CZ5L016PT4100 |  | Excavation and Bedding and Pipe Installation for Fire Hydrant - (RD-L-16)-Z5-L016-PT | 4d | 2027-06-27 | 2027-07-01 | RHD4CZ5L016PT1502, RHD4CZ5L016PT1501, RHD4CZ5L016PT1500, RHD4ENSDZ5APPPT130 |  | -157.02d |
| RHD4CZ5L016PT4200 |  | Valve Installation for Fire Hydrant - (RD-L-16)-Z5-L016-PT | 3d | 2027-07-01 | 2027-07-05 | RHD4CZ5L016PT4100 |  | -157.02d |
| RHD4CZ5L016PT4300 |  | Stem for Fire Hydrant - (RD-L-16)-Z5-L016-PT | 3d | 2027-07-05 | 2027-07-08 | RHD4CZ5L016PT4200 |  | -157.02d |
| RHD4CZ5L016PT4400 |  | Fire Installation for Fire Hydrant - (RD-L-16)-Z5-L016-PT | 3d | 2027-07-08 | 2027-07-12 | RHD4CZ5L016PT4300, RHD4CZ8L04SW3501, RHD4PRSHLDOSPT1500, RHD4PRSHLSTAGPT1500 |  | -157.02d |
| RHD4CZ5L016PT4500 |  | Protection Barriers for Fire Hydrant - (RD-L-16)-Z5-L016-PT | 2d | 2027-07-12 | 2027-07-14 | RHD4CZ5L016PT4400 |  | -157.02d |
|  | 3835 | **RHD4-02-002-L016-(PT)-Concrete Encasement** |  | 2027-06-07 | 2027-06-17 |  |  |  |
| RHD4CZ5L016PT5100 |  | Pipe Encasement for Potable Pipelines - (RD-L-16)-Z5-L016-PT | 9d | 2027-06-07 | 2027-06-17 | RHD4CZ5L016PT1302 FF, RHD4CZ5L016PT1301 FF, RHD4CZ5L016PT1300 FF, RHD4CZ5L016PT1302 SS, RHD4CZ5L016PT1301 SS, RHD4CZ5L016PT1300 SS, RHD4CZ5L016PT1202, RHD4CZ5L016PT1201, RHD4CZ5L016PT1200 |  | -162.02d |
|  | 3836 | **RHD4-02-002-Z5-L016-Irrigation Network - IRR** |  | 2026-08-04 | 2027-07-10 |  |  |  |

| ID | WBS | Task | Duration | Start | Finish | Predecessors | Complete | Total float |
| --- | --- | --- | --- | --- | --- | --- | --- | --- |
|  | 3839 | **RHD4-02-002-L016-(IRR)-HDPE Pipes - 200 mm diameter** |  | 2027-05-29 | 2027-06-16 |  |  |  |
| RHD4CZ5L016IRR1102 |  | Excavation works for HDPE Pipline 200 mm - (RD-L-16)-Z5-L016-IRR | 4d | 2027-05-29 | 2027-06-02 | RHD4CZ5L016PT1102, RHD4CZ5L016PT1101, RHD4ENSDZ5APPIRR140, RHD4ENMSRR2000 |  | -162.02d |
| RHD4CZ5L016IRR1202 |  | Bedding works for HDPE Pipline 200 mm - (RD-L-16)-Z5-L016-IRR | 3d | 2027-06-02 | 2027-06-06 | RHD4CZ5L016IRR1102 |  | -162.02d |
| RHD4CZ5L016IRR1302 |  | Installing for HDPE Pipline 200 mm - (RD-L-16)-Z5-L016-IRR | 4d | 2027-06-06 | 2027-06-10 | RHD4CZ5L016IRR1202, RHD4PRSHLDOSIRR1000, RHD4PRSHLSTAGIRR1000 |  | -162.02d |
| RHD4CZ5L016IRR1402 |  | Primary Test for HDPE Pipline 200 mm - (RD-L-16)-Z5-L016-IRR | 2d | 2027-06-10 | 2027-06-13 | RHD4CZ5L016IRR1302 |  | -162.02d |
| RHD4CZ5L016IRR1502 |  | Backfilling and warning tape works for HDPE Pipline 200 mm - (RD-L-16)-Z5-L016-IRR | 3d | 2027-06-13 | 2027-06-16 | RHD4CZ5L016IRR1402 |  | -162.02d |
|  | 1770 | **RHD4-02-002-L016-(IRR)-Air Valves** |  | 2027-06-26 | 2027-06-30 |  |  |  |
| RHD4CZ5L016IRR3103 |  | Installation for Air Valves for Irrigation Network - (RD-L-16)-Z5-L016-IRR | 2d | 2027-06-26 | 2027-06-28 | RHD4CZ5L016IRR2302 |  | -162.02d |
| RHD4CZ5L016IRR3203 |  | Stem and Service box for Air Valves for Irrigation Network - (RD-L-16)-Z5-L016-IRR | 2d | 2027-06-28 | 2027-06-30 | RHD4CZ5L016IRR3103, RHD4CZ5L016IRR2402 |  | -158.02d |
|  | 3843 | **RHD4-02-002-L016-(IRR)-HDPE Pipes - 450 mm diameter** |  |  |  |  |  |  |
|  | 6107 | **RHD4-02-002-L016-(IRR)-HDPE Pipes - 160 mm diameter** |  | 2026-08-04 | 2027-07-03 |  |  |  |
| RHD4CZ5L016IRR1100 |  | Excavation works for HDPE Pipline 160 mm - (RD-L-16)-Z5-L016-IRR | 2d | 2026-08-04 A | 2026-08-05 A | RHD4CZ5L016IRR3103 | 100% |  |
| RHD4CZ5L016IRR1200 |  | Bedding works for HDPE Pipline 160 mm - (RD-L-16)-Z5-L016-IRR | 2d | 2026-08-06 A | 2026-08-08 A | RHD4CZ5L016IRR1100 | 100% |  |
| RHD4CZ5L016IRR1300 |  | Installing for HDPE Pipline 160 mm - (RD-L-16)-Z5-L016-IRR | 2d | 2026-08-08 A | 2026-08-09 A | RHD4CZ5L016IRR1200 | 100% |  |
| RHD4CZ5L016IRR1400 |  | Primary Test for HDPE Pipline 160 mm - (RD-L-16)-Z5-L016-IRR | 2d | 2027-06-28 | 2027-06-30 | RHD4CZ5L016IRR1300 |  | -156.02d |
| RHD4CZ5L016IRR1500 |  | Backfilling and warning tape works for HDPE Pipline 160 mm - (RD-L-16)-Z5-L016-IRR | 2d | 2027-06-30 | 2027-07-03 | RHD4CZ5L016IRR1400 |  | -156.02d |
|  | 6115 | **RHD4-02-002-L016-(IRR)-Gate Valves (Direct Buried)** |  | 2027-06-28 | 2027-07-06 |  |  |  |
| RHD4CZ5L016IRR3100 |  | Installation for Direct Buried Gate Valves - (RD-L-16)-Z5-L016-IRR | 3d | 2027-06-28 | 2027-07-01 | RHD4CZ5L016IRR3103, RHD4CZ5L016IRR1300 SS, RHD4CZ5L016IRR1300 FF |  | -155.02d |
| RHD4CZ5L016IRR3200 |  | Stem and Service box for Direct Buried Gate Valves - (RD-L-16)-Z5-L016-IRR | 3d | 2027-07-03 | 2027-07-06 | RHD4CZ5L016SW5201, RHD4CZ5L016SW3501, RHD4CZ5L016IRR3100, RHD4CZ5L016IRR1500 |  | -156.02d |
|  | 6116 | **RHD4-02-002-L016-(IRR)-Butterfly Valve Chamber** |  | 2027-06-28 | 2027-07-07 |  |  |  |
| RHD4CZ5L016IRR2100 |  | Excavation and Bedding for Butterfly Valve Chamber for Irrigation Network - (RD-L-16)-Z5-L016-IRR | 2d | 2027-06-28 | 2027-06-30 | RHD4CZ5L016IRR3103 |  | -162.02d |
| RHD4CZ5L016IRR2200 |  | PC works for Butterfly Valve Chamber for Irrigation Network - (RD-L-16)-Z5-L016-IRR | 2d | 2027-06-30 | 2027-07-03 | RHD4CZ5L016IRR2100 |  | -162.02d |
| RHD4CZ5L016IRR2300 |  | Installation for Butterfly Valve Chamber for Irrigation Network - (RD-L-16)-Z5-L016-IRR | 2d | 2027-07-03 | 2027-07-05 | RHD4CZ5L016IRR2200 |  | -162.02d |
| RHD4CZ5L016IRR2400 |  | Backfilling works for Butterfly Valve Chamber for Irrigation Network - (RD-L-16)-Z5-L016-IRR | 2d | 2027-07-05 | 2027-07-07 | RHD4CZ5L016IRR2300 |  | -162.02d |
|  | 6117 | **RHD4-02-002-L016-(IRR)-Butterfly Valves** |  | 2027-07-05 | 2027-07-10 |  |  |  |
| RHD4CZ5L016IRR3101 |  | Installation for Butterfly Valves for Irrigation Network - (RD-L-16)-Z5-L016-IRR | 2d | 2027-07-05 | 2027-07-07 | RHD4CZ5L016IRR3103, RHD4CZ5L016IRR2300 |  | -162.02d |
| RHD4CZ5L016IRR3201 |  | Stem and Service box for Butterfly Valves for Irrigation Network - (RD-L-16)-Z5-L016-IRR | 2d | 2027-07-07 | 2027-07-10 | RHD4CZ5L016IRR3101, RHD4CZ5L016IRR2400 |  | -162.02d |
|  | 1769 | **RHD4-02-002-L016-(IRR)-Air Valve Chamber** |  | 2027-06-16 | 2027-06-28 |  |  |  |
| RHD4CZ5L016IRR2102 |  | Excavation and Bedding for Valve Chamber for Irrigation Network - (RD-L-16)-Z5-L016-IRR | 2d | 2027-06-16 | 2027-06-19 | RHD4CZ5L016IRR1502 |  | -162.02d |
| RHD4CZ5L016IRR2202 |  | PC works for Valve Chamber for Irrigation Network - (RD-L-16)-Z5-L016-IRR | 2d | 2027-06-19 | 2027-06-21 | RHD4CZ5L016IRR2102 |  | -162.02d |
| RHD4CZ5L016IRR2302 |  | Installation for Valve Chamber for Irrigation Network - (RD-L-16)-Z5-L016-IRR | 4d | 2027-06-21 | 2027-06-26 | RHD4CZ5L016IRR2202 |  | -162.02d |
| RHD4CZ5L016IRR2402 |  | Backfilling works for Valve Chamber for Irrigation Network - (RD-L-16)-Z5-L016-IRR | 2d | 2027-06-26 | 2027-06-28 | RHD4CZ5L016IRR2302 |  | -158.02d |
|  | 3842 | **RHD4-02-002-L016-(IRR)-HDPE Pipes - 400 mm diameter** |  |  |  |  |  |  |
|  | 3841 | **RHD4-02-002-L016-(IRR)-HDPE Pipes - 315 mm diameter** |  | 2027-05-31 | 2027-06-12 |  |  |  |
| RHD4CZ5L016IRR1104 |  | Excavation works for HDPE Pipline 315 mm - (RD-L-16)-Z5-L016-IRR | 2d | 2027-05-31 | 2027-06-02 | RHD4CZ5L016PT1102, RHD4CZ5L016PT1101, RHD4CZ5L016PT1100, RHD4ENSDZ5APPIRR140, RHD4ENMSRR2000 |  | -162.02d |
| RHD4CZ5L016IRR1204 |  | Bedding works for HDPE Pipline 315 mm - (RD-L-16)-Z5-L016-IRR | 2d | 2027-06-02 | 2027-06-05 | RHD4CZ5L016IRR1104 |  | -162.02d |
| RHD4CZ5L016IRR1304 |  | Installing for HDPE Pipline 315 mm - (RD-L-16)-Z5-L016-IRR | 2d | 2027-06-05 | 2027-06-07 | RHD4CZ5L016IRR1204, RHD4PRSHLDOSIRR1000, RHD4PRSHLSTAGIRR1000 |  | -162.02d |
| RHD4CZ5L016IRR1404 |  | Primary Test for HDPE Pipline 315 mm - (RD-L-16)-Z5-L016-IRR | 2d | 2027-06-07 | 2027-06-09 | RHD4CZ5L016IRR1304 |  | -162.02d |
| RHD4CZ5L016IRR1504 |  | Backfilling and warning tape works for HDPE Pipline 315 mm - (RD-L-16)-Z5-L016-IRR | 2d | 2027-06-09 | 2027-06-12 | RHD4CZ5L016IRR1404 |  | -162.02d |
|  | 3852 | **RHD4-02-002-L016-(IRR)-Concrete Encasement** |  |  |  |  |  |  |
|  | 3870 | **RHD4-02-002-Z5-L016-Medium Voltage Network - MV** |  | 2027-06-20 | 2027-07-29 |  |  |  |
|  | 3871 | **RHD4-02-002-L016-(MV)-Medium Voltage cable trench** |  | 2027-06-20 | 2027-07-20 |  |  |  |
| RHD4CZ5L016MV1100 |  | Excavation for Medium Voltage Trench - (RD-L-16)-Z5-L016-MV | 13d | 2027-06-20 | 2027-07-05 | RHD4ENSDZ5APPMV150, RHD4CZ5L016RD3100, RHD4CZ5L08LV3100 |  | -153.02d |
| RHD4CZ5L016MV1200 |  | Trench Backfilling for Medium Voltage Network - (RD-L-16)-Z5-L016-MV | 13d | 2027-07-05 | 2027-07-20 | RHD4CZ5L016MV1100 |  | -116.02d |
|  | 3873 | **RHD4-02-002-L016-(MV)-Medium Voltage cables 3Cx 500 mm²** |  | 2027-07-05 | 2027-07-29 |  |  |  |
| RHD4CZ5L016MV3100 |  | Installation of Medium Voltage Cables 3Cx 500 mm² - (RD-L-16)-Z5-L016-MV | 8d | 2027-07-05 | 2027-07-14 | RHD4CZ5L016MV1100, RHD4ENMSMV2000 |  | -153.02d |
| RHD4CZ5L016MV3200 |  | Joints Installation of Medium Voltage Cables 3Cx 500 mm² - (RD-L-16)-Z5-L016-MV | 2d | 2027-07-14 | 2027-07-17 | RHD4CZ5L016MV3100, RHD4PRSHLDOSMV1300, RHD4PRSHLSTAGMV1300 |  | -113.02d |
| RHD4CZ5L016MV3300 |  | Testing of Medium Voltage Cables 3Cx 500 mm² - (RD-L-16)-Z5-L016-MV | 8d | 2027-07-20 | 2027-07-29 | RHD4CZ5L016MV3200, RHD4CZ5L016MV1200 |  | -116.02d |
|  | 5388 | **RHD4-02-002-L07-(MV)-Normally open Point (Outdoor Type)** |  |  |  |  |  |  |
|  | 1982 | **RHD4-02-002-L07-(MV)-Medium Voltage cables 3Cx 50 mm²** |  | 2027-07-14 | 2027-07-17 |  |  |  |
| RHD4CZ5L016MV3401 |  | Termination of Medium Voltage Cables 3Cx 50 mm² - (RD-L-16)-Z5-L016-MV | 2d | 2027-07-14 | 2027-07-17 | RHD4CZ5L016MV3100 |  | -153.02d |
|  | 3877 | **RHD4-02-002-Z5-L016-Low Voltage Network - LV** |  | 2027-07-29 | 2027-08-08 |  |  |  |
|  | 3878 | **RHD4-02-002-L016-(LV)-Low Voltage duct banks** |  |  |  |  |  |  |
|  | 3880 | **RHD4-02-002-L016-(LV)-Low Voltage cables** |  | 2027-07-29 | 2027-08-08 |  |  |  |
| RHD4CZ5L016LV3100 |  | Excavation for Low Voltage Cables for Low Voltage Network - (RD-L-16)-Z5-L016-LV | 2d | 2027-07-29 | 2027-08-01 | RHD4ENSDZ5APPLV160, RHD4CZ5L016MV3300 |  | -116.02d |
| RHD4CZ5L016LV3200 |  | Cable Laying of Low Voltage Cables for Low Voltage Network - (RD-L-16)-Z5-L016-LV | 2d | 2027-08-01 | 2027-08-03 | RHD4CZ5L016LV3100, RHD4PRSHLDOSLV1100, RHD4ENMSLV2000, RHD4ENMSLV2010, RHD4PRSHLSTAGLV1100 |  | -116.02d |
| RHD4CZ5L016LV3300 |  | Warning tape and Backfill for Low Voltage Cables for Low Voltage Network - (RD-L-16)-Z5-L016-LV | 2d | 2027-08-03 | 2027-08-05 | RHD4CZ5L016LV3200 |  | -116.02d |
| RHD4CZ5L016LV3400 |  | Testing of Low Voltage Cables for Low Voltage Network - (RD-L-16)-Z5-L016-LV | 2d | 2027-08-05 | 2027-08-08 | RHD4CZ5L016LV3300 |  | -116.02d |
|  | 3883 | **RHD4-02-002-Z5-L016-Street Lighting Network - SL** |  | 2027-06-16 | 2027-10-02 |  |  |  |
|  | 3884 | **RHD4-02-002-L016-(SL)-Street Lighting duct banks** |  | 2027-06-16 | 2027-06-26 |  |  |  |
| RHD4CZ5L016SL2100 |  | Excavation of Duct Banks for Street Lighting Network - (RD-L-16)-Z5-L016-SL | 2d | 2027-06-16 | 2027-06-19 | RHD4ENSDZ5APPSL170, RHD4CZ5L016IRR1502 |  | -161.02d |
| RHD4CZ5L016SL2200 |  | Installation of Duct Banks for Street Lighting Network - (RD-L-16)-Z5-L016-SL | 2d | 2027-06-19 | 2027-06-21 | RHD4CZ5L016SL2100, RHD4PRSHLDOSSL1000, RHD4PRSHLSTAGSL1000 |  | -161.02d |
| RHD4CZ5L016SL2300 |  | Pouring of Duct Banks for Street Lighting Network - (RD-L-16)-Z5-L016-SL | 2d | 2027-06-21 | 2027-06-23 | RHD4CZ5L016SL2200 |  | -161.02d |
| RHD4CZ5L016SL2400 |  | Backfilling of Duct Banks for Street Lighting Network - (RD-L-16)-Z5-L016-SL | 2d | 2027-06-23 | 2027-06-26 | RHD4CZ5L016SL2300 |  | -161.02d |
|  | 3885 | **RHD4-02-002-L016-(SL)-Street Lighting Drawpit** |  | 2027-08-08 | 2027-08-12 |  |  |  |
| RHD4CZ5L016SL5100 |  | Excavation of Drawpit size 600x600x900mm for Street Lighting Network - (RD-L-16)-Z5-L016-SL | 2d | 2027-08-08 | 2027-08-10 | RHD4CZ5L016SL2300, RHD4ENSDZ5APPSL170, RHD4CZ5L016LV3400 |  | -115.02d |
| RHD4CZ5L016SL5200 |  | Installation of Drawpit size 600x600x900mm for Street Lighting Network - (RD-L-16)-Z5-L016-SL | 2d | 2027-08-10 | 2027-08-12 | RHD4CZ5L016SL5100, RHD4PRSHLDOSSL1400, RHD4PRSHLSTAGSL1400 |  | -115.02d |
|  | 3886 | **RHD4-02-002-L016-(SL)-Street Lighting cables** |  | 2027-08-12 | 2027-09-04 |  |  |  |
| RHD4CZ5L016SL3100 |  | Excavation for Street Lighting Cables for Street Lighting Network - (RD-L-16)-Z5-L016-SL | 6d | 2027-08-12 | 2027-08-19 | RHD4ENSDZ5APPSL170, RHD4CZ5L016SL5200 |  | -115.02d |
| RHD4CZ5L016SL3200 |  | Cable Laying of Street Lighting Cables for Street Lighting Network - (RD-L-16)-Z5-L016-SL | 5d | 2027-08-19 | 2027-08-25 | RHD4CZ5L016SL3100, RHD4PRSHLDOSSL1100, RHD4ENMSSL2000, RHD4ENMSSL2010, RHD4PRSHLSTAGSL1100 |  | -115.02d |

| ID | WBS | Task | Duration | Start | Finish | Predecessors | Total float |
| --- | --- | --- | --- | --- | --- | --- | --- |
| RHD4CZ5L016SL3300 |  | Warning tape and Backfill for Street Lighting Cables for Street Lighting Network - (RD-L-16)-Z5-L016-SL | 5d | 2027-08-25 | 2027-08-31 | RHD4CZ5L016SL3200 | -115.02d |
| RHD4CZ5L016SL3400 |  | Testing of Street Lighting Cables for Street Lighting Network - (RD-L-16)-Z5-L016-SL | 3d | 2027-08-31 | 2027-09-04 | RHD4CZ5L016SL3300 | -115.02d |
|  | 3887 | **RHD4-02-002-L016-(SL)-Street Lighting Poles** |  | 2027-09-04 | 2027-10-02 |  |  |
| RHD4CZ5L016SL1100 |  | Excavation for RC Base for Lighting Poles for Street Lighting Network - (RD-L-16)-Z5-L016-SL | 4d | 2027-09-04 | 2027-09-08 | RHD4CZ5L016SL2400, RHD4ENSDZ5APPSL170, RHD4CZ5L016SL3400 | -115.02d |
| RHD4CZ5L016SL1200 |  | Installation for RC Base for Lighting Poles for Street Lighting Network - (RD-L-16)-Z5-L016-SL | 4d | 2027-09-08 | 2027-09-13 | RHD4CZ5L016SL1100 | -115.02d |
| RHD4CZ5L016SL1300 |  | Backfill for RC Base for Lighting Poles for Street Lighting Network - (RD-L-16)-Z5-L016-SL | 4d | 2027-09-13 | 2027-09-18 | RHD4CZ5L016SL1200 | -115.02d |
| RHD4CZ5L016SL1400 |  | Installation for Lighting Poles for Street Lighting Network - (RD-L-16)-Z5-L016-SL | 5d | 2027-09-18 | 2027-09-25 | RHD4PRSHLDOSSL1200, RHD4ENMSSL2000, RHD4ENMSSL2010, RHD4PRSHLSTAGSL1200, RHD4CZ5L016SL1300 | -115.02d |
| RHD4CZ5L016SL1500 |  | Luminaire Installation for Lighting Poles for Street Lighting Network - (RD-L-16)-Z5-L016-SL | 4d | 2027-09-27 | 2027-10-02 | RHD4CZ5L016SL1400, RHD4CZ5L016SL6100, RHD4PRSHLDOSSL1300, RHD4PRSHLSTAGSL1300 | -115.02d |
|  | 3889 | **RHD4-02-002-L016-(SL)-Street Lighting Earthing System** |  | 2027-09-25 | 2027-09-27 |  |  |
| RHD4CZ5L016SL6100 |  | Installation of Earthing for Lighting Poles and Fedder Pillers for Street Lighting Network - (RD-L-16)-Z5-L016-SL | 2d | 2027-09-25 | 2027-09-27 | RHD4CZ5L016SL1400, RHD4ENMSER2000, RHD4ENMSER2010 | -115.02d |
|  | 3895 | **RHD4-02-002-Z5-L016-Telecommunications Network - TC** |  | 2027-01-26 | 2027-11-07 |  |  |
|  | 3896 | **RHD4-02-002-L016-(TC)-Telecommunications Ducts** |  | 2027-10-02 | 2027-11-07 |  |  |
| RHD4CZ5L016TC2100 |  | Excavation of HDPE Ducts for Telecom Network - (RD-L-16)-Z5-L016-TC | 9d | 2027-10-02 | 2027-10-12 | RHD4ENSDZ5APPTC190, RHD4CZ5L016SL1500 | -115.02d |
| RHD4CZ5L016TC2200 |  | Installation of HDPE Ducts for Telecom Network - (RD-L-16)-Z5-L016-TC | 13d | 2027-10-12 | 2027-10-27 | RHD4CZ5L016TC2100, RHD4PRSHLDOSTC1000, RHD4PRSHLSTAGTC1000 | -115.02d |
| RHD4CZ5L016TC2400 |  | Backfilling of HDPE Ducts for Telecom Network - (RD-L-16)-Z5-L016-TC | 9d | 2027-10-27 | 2027-11-07 | RHD4CZ5L016TC2200, RHD4CZ5L016TC5200 | -115.02d |
|  | 3897 | **RHD4-02-002-L016-(TC)-Telecommunications Manholes** |  | 2027-10-12 | 2027-10-21 |  |  |
| RHD4CZ5L016TC5100 |  | Excavation for Manholes for Telecom Network - (RD-L-16)-Z5-L016-TC | 4d | 2027-10-12 | 2027-10-17 | RHD4CZ5L016TC2100, RHD4ENSDZ5APPTC190 | -110.02d |
| RHD4CZ5L016TC5200 |  | Installation of Manholes for Telecom Network - (RD-L-16)-Z5-L016-TC | 4d | 2027-10-17 | 2027-10-21 | RHD4CZ5L016TC5100, RHD4CZ5L016TC2200 SS, RHD4PRSHLDOSTC1200, RHD4PRSHLSTAGTC1200 | -110.02d |
|  | 3898 | **RHD4-02-002-L016-(TC)-Telecomminications Road Crossings** |  | 2027-01-26 | 2027-02-03 |  |  |
| RHD4CZ5L016TC3100 |  | Excavation for Road Crossings for Telecom Network - (RD-L-16)-Z5-L016-TC | 2d | 2027-01-26 | 2027-01-27 | RHD4ENSDZ5APPTC190, RHD4CZ5L016ST3102 | -169d |
| RHD4CZ5L016TC3200 |  | Installation of Road Crossings for Telecom Network - (RD-L-16)-Z5-L016-TC | 2d | 2027-01-28 | 2027-01-30 | RHD4CZ5L016TC3100, RHD4PRSHLDOSTC1100, RHD4PRSHLSTAGTC1100 | -167d |
| RHD4CZ5L016TC3300 |  | Pouring of Road Crossings for Telecom Network - (RD-L-16)-Z5-L016-TC | 2d | 2027-01-31 | 2027-02-01 | RHD4CZ5L016TC3200 | -167d |
| RHD4CZ5L016TC3400 |  | Backfilling of Road Crossings for Telecom Network - (RD-L-16)-Z5-L016-TC | 2d | 2027-02-02 | 2027-02-03 | RHD4CZ5L016TC3300 | -167d |
|  | 3899 | **RHD4-02-002-Z5-L016-Information and Communication Technologies - ICT** |  | 2027-01-28 | 2027-12-23 |  |  |
|  | 3900 | **RHD4-02-002-L016-(ICT)-Information and Communication Technologies Ducts** |  | 2027-11-07 | 2027-12-14 |  |  |
| RHD4CZ5L016ICT2100 |  | Excavation of HDPE Ducts for ICT Network - (RD-L-16)-Z5-L016-ICT | 9d | 2027-11-07 | 2027-11-17 | RHD4CZ5L016ICT3400, RHD4ENSDZ5APPICT200, RHD4CZ5L016TC2400 | -115.02d |
| RHD4CZ5L016ICT2200 |  | Installation of HDPE Ducts for ICT Network - (RD-L-16)-Z5-L016-ICT | 14d | 2027-11-17 | 2027-12-04 | RHD4CZ5L016ICT2100, RHD4PRSHLDOSICT1000, RHD4PRSHLSTAGICT1000 | -115.02d |
| RHD4CZ5L016ICT2400 |  | Backfilling of HDPE Ducts for ICT Network - (RD-L-16)-Z5-L016-ICT | 9d | 2027-12-04 | 2027-12-14 | RHD4CZ5L016ICT2200 | -115.02d |
|  | 3901 | **RHD4-02-002-L016-(ICT)-Information and Communication Technologies Manholes** |  | 2027-12-14 | 2027-12-23 |  |  |
| RHD4CZ5L016ICT5100 |  | Excavation for Manholes for ICT Network - (RD-L-16)-Z5-L016-ICT | 4d | 2027-12-14 | 2027-12-19 | RHD4ENSDZ5APPICT200, RHD4CZ5L016ICT2400 | -115.02d |
| RHD4CZ5L016ICT5200 |  | Installation of Manholes for ICT Network - (RD-L-16)-Z5-L016-ICT | 4d | 2027-12-19 | 2027-12-23 | RHD4CZ5L016ICT5100, RHD4CZ5L016ICT2200 SS, RHD4PRSHLDOSICT1200, RHD4PRSHLSTAGICT1200 | -115.02d |
|  | 3902 | **RHD4-02-002-L016-(ICT)-Information and Communication Technologies Road Crossings** |  | 2027-01-28 | 2027-02-20 |  |  |
| RHD4CZ5L016ICT3100 |  | Excavation for Road Crossings for ICT Network - (RD-L-16)-Z5-L016-ICT | 2d | 2027-01-28 | 2027-01-30 | RHD4CZ5L016TC3100, RHD4ENSDZ5APPICT200 | -169d |
| RHD4CZ5L016ICT3200 |  | Installation of Road Crossings for ICT Network - (RD-L-16)-Z5-L016-ICT | 2d | 2027-02-14 | 2027-02-15 | RHD4CZ5L016ICT3100, RHD4PRSHLDOSICT1100, RHD4PRSHLSTAGICT1100 | -181d |
| RHD4CZ5L016ICT3300 |  | Pouring of Road Crossings for ICT Network - (RD-L-16)-Z5-L016-ICT | 2d | 2027-02-16 | 2027-02-17 | RHD4CZ5L016ICT3200 | -181d |
| RHD4CZ5L016ICT3400 |  | Backfilling of Road Crossings for ICT Network - (RD-L-16)-Z5-L016-ICT | 2d | 2027-02-18 | 2027-02-20 | RHD4CZ5L016ICT3300 | -181d |
|  | 3890 | **RHD4-02-002-Z5-L016-Landscape Network - LS** |  |  |  |  |  |
|  | 3891 | **RHD4-02-002-L016-(LS)-Landscape Lighting cables** |  |  |  |  |  |
|  | 3892 | **RHD4-02-002-L016-(LS)-Landscape Feeder Pillars** |  |  |  |  |  |
|  | 3893 | **RHD4-02-002-L016-(LS)-Landscape Bollard Poles** |  |  |  |  |  |
|  | 3894 | **RHD4-02-002-L016-(LS)-Landscape Feeder Pillars Earthing** |  |  |  |  |  |
|  | 3903 | **RHD4-02-002-Z5-L016-Security Network - CCTV** |  | 2027-12-23 | 2028-02-05 |  |  |
|  | 3904 | **RHD4-02-002-L016-(CCTV)-Civil Works** |  | 2027-12-23 | 2028-01-04 |  |  |
| RHD4CZ5L016CCTV2100 |  | Civil Works for Security Network - (RD-L-16)-Z5-L016-CCTV | 10d | 2027-12-23 | 2028-01-04 | RHD4CZ5L016ICT5200 | -115.02d |
|  | 3905 | **RHD4-02-002-L016-(CCTV)-CCTV Poles** |  | 2028-01-04 | 2028-01-16 |  |  |
| RHD4CZ5L016CCTV1100 |  | Excavation for RC Base for CCTV Poles for Security Network - (RD-L-16)-Z5-L016-CCTV | 2d | 2028-01-04 | 2028-01-06 | RHD4CZ5L016CCTV2100, RHD4ENSDZ5APPCCTV210 | -115.02d |
| RHD4CZ5L016CCTV1200 |  | Installation for RC Base for CCTV Poles for Security Network - (RD-L-16)-Z5-L016-CCTV | 2d | 2028-01-06 | 2028-01-09 | RHD4CZ5L016CCTV1100 | -115.02d |
| RHD4CZ5L016CCTV1300 |  | Backfill for RC Base for CCTV Poles for Security Network - (RD-L-16)-Z5-L016-CCTV | 2d | 2028-01-09 | 2028-01-11 | RHD4CZ5L016CCTV1200 | -115.02d |
| RHD4CZ5L016CCTV1400 |  | Installation for CCTV Poles for Security Network - (RD-L-16)-Z5-L016-CCTV | 2d | 2028-01-11 | 2028-01-13 | RHD4CZ5L016CCTV1300, RHD4PRSHLDOSCCTV1000, RHD4PRSHLSTACCTV1000 | -115.02d |
| RHD4CZ5L016CCTV1500 |  | Protection post Installation for CCTV Poles for Security Network - (RD-L-16)-Z5-L016-CCTV | 2d | 2028-01-13 | 2028-01-16 | RHD4CZ5L016CCTV1400 | -115.02d |
|  | 3906 | **RHD4-02-002-L016-(CCTV)-Camera** |  | 2028-01-16 | 2028-01-18 |  |  |
| RHD4CZ5L016CCTV3100 |  | Installation for Cameras for Security Network - (RD-L-16)-Z5-L016-CCTV | 2d | 2028-01-16 | 2028-01-18 | RHD4CZ5L016CCTV1400, RHD4CZ5L016CCTV4100, RHD4PRSHLDOSCCTV1100, RHD4PRSHLSTACCTV1100, RHD4CZ5L016CCTV1500 | -115.02d |
|  | 3907 | **RHD4-02-002-L016-(CCTV)-Power and Infrastructure** |  | 2028-01-13 | 2028-01-18 |  |  |
| RHD4CZ5L016CCTV4100 |  | Installation of Power outlet, UPS and midspan for PTZ Camerafor Cameras for Security Network - (RD-L-16)-Z5-L016-CCTV | 2d | 2028-01-13 | 2028-01-16 | RHD4CZ5L016CCTV1400, RHD4PRSHLDOSCCTV1300, RHD4PRSHLSTACCTV1300 | -115.02d |
| RHD4CZ5L016CCTV4200 |  | Short Range Wireless PoP wireless Bridgefor CCTV Poles for Security Network - (RD-L-16)-Z5-L016-CCTV | 2d | 2028-01-16 | 2028-01-18 | RHD4CZ5L016CCTV4100 | -115.02d |
|  | 3909 | **RHD4-02-002-L016-(CCTV)-CCTV Panels and Components** |  | 2028-01-18 | 2028-02-05 |  |  |
| RHD4CZ5L016CCTV6100 |  | Installation for CCTV Panels for Security Network - (RD-L-16)-Z5-L016-CCTV | 15d | 2028-01-18 | 2028-02-05 | RHD4CZ5L016CCTV4200, RHD4CZ5L016CCTV3100, RHD4PRSHLDOSCCTV1200, RHD4PRSHLSTACCTV1200, RHD4PRLOLSTACCTV1001 | -115.02d |
|  | 3542 | **RHD4-02-002-Z5-A014** |  | 2026-06-09 | 2028-03-22 |  |  |
|  | 3573 | **RHD4-02-002-Z5-A014-Crossings Sewage Network - SWCr** |  |  |  |  |  |
|  | 3583 | **RHD4-02-002-A014-(SWCr)-MH Works - 1200 mm diameter** |  |  |  |  |  |
|  | 3579 | **RHD4-02-002-A014-(SWCr)-UPVC Pipes - 200 mm diameter** |  |  |  |  |  |
|  | 3617 | **RHD4-02-002-Z5-A014-Crossings Potable Network - PTCr** |  |  |  |  |  |
|  | 3620 | **RHD4-02-002-A014-(PTCr)-HDPE Pipes - 200 mm diameter** |  |  |  |  |  |
|  | 3623 | **RHD4-02-002-A014-(PTCr)-Gate Valves (Direct Buried)** |  |  |  |  |  |
|  | 3630 | **RHD4-02-002-A014-(PTCr)-Fire Hydrant** |  |  |  |  |  |
|  | 3664 | **RHD4-02-002-Z5-A014-Crossings Irrigation Network - IRRC** |  |  |  |  |  |
|  | 3665 | **RHD4-02-002-A014-(IRRC)-HDPE Pipes - 160 mm diameter** |  |  |  |  |  |
|  | 3668 | **RHD4-02-002-A014-(IRRC)-HDPE Pipes - 250 mm diameter** |  |  |  |  |  |
|  | 3673 | **RHD4-02-002-A014-(IRRC)-Gate Valves (Direct Buried)** |  |  |  |  |  |
|  | 3678 | **RHD4-02-002-A014-(IRRC)-Air Valve Chamber** |  |  |  |  |  |

| ID | WBS | Task | Duration | Start | Finish | Predecessors | Complete | Total float |
| --- | --- | --- | --- | --- | --- | --- | --- | --- |
|  | 3679 | **RHD4-02-002-A014-(IRRC)-Air Valves** |  |  |  |  |  |  |
|  | 3721 | **RHD4-02-002-Z5-A014-Road Works - RD** |  | 2026-06-09 | 2028-03-22 |  |  |  |
|  | 3722 | **RHD4-02-002-A014-(RD)-Subgrade** |  | 2026-06-09 | 2026-06-23 |  |  |  |
| RHD4CZ5A014RD1100 |  | Supply, lay and compaction subgrade compacted thickness 300 mm for Roads - (RD-A-1 /4)-Z5-A014-RD | 5d | 2026-06-09 A | 2026-06-23 A | RHD4ENSDZ5APPRD220, RHD4ENSDZ5APPEW100 SS, RHD4CZ5A014ST1506, RHD4CZ5A014ST3302 | 100% |  |
|  | 3723 | **RHD4-02-002-A014-(RD)-Aggregate Base Course** |  | 2026-09-21 | 2026-10-03 |  |  |  |
| RHD4CZ5A014RD2100 |  | Supply, lay and compaction Aggregate base course compacted thickness 300 mmfor Roads - (RD-A-1 /4)-Z5-A014-RD | 6d | 2026-09-21 A | 2026-10-03 A | RHD4PRSHLDOSRD1000, RHD4PRSHLSTAGRD1000, RHD4CZ5A014RD1100 | 100% |  |
|  | 3724 | **RHD4-02-002-A014-(RD)-Bituminous base course Two Layers, including (MC1)&(RC2)** |  | 2026-10-20 | 2028-02-16 |  |  |  |
| RHD4CZ5A014RD3100 |  | Supply, lay and Asphaltic base course including Prime Coat (MC1) for 1st Layer - (RD-A-1 /4)-Z5-A014-RD | 7d | 2026-10-20 A | 2027-01-21 | RHD4PRSHLDOSRD1100, RHD4ENMSASPH2000, RHD4ENMSASPH2010, RHD4PRSHLSTAGRD1100, RHD4CZ5A014RD2100 | 85% | -177d |
| RHD4CZ5A014RD3200 |  | Supply, lay and Asphaltic base course including Tack Coat (RC2) for 2nd Layer - (RD-A-1 /4)-Z5-A014-RD | 7d | 2028-02-08 | 2028-02-16 | RHD4PRSHLDOSRD1100, RHD4PRSHLSTAGRD1100, RHD4CZ5A014ICT5200 |  | -109.02d |
|  | 3726 | **RHD4-02-002-A014-(RD)-Precast Concrete Curb** |  | 2028-02-16 | 2028-03-02 |  |  |  |
| RHD4CZ5A014RD5100 |  | Supply and installation Precast Concrete Kerb for Roads - (RD-A-1 /4)-Z5-A014-RD | 9d | 2028-02-16 | 2028-03-02 | RHD4CZ5A014RD3200, RHD4PRSHLDOSRD1200, RHD4ENMSRD2000, RHD4ENMSRD2010, RHD4PRSHLSTAGRD1200, RHD4CZ5L016RD5100 |  | -109.02d |
|  | 3729 | **RHD4-02-002-A014-(RD)-Traffic Signage** |  | 2028-03-02 | 2028-03-11 |  |  |  |
| RHD4CZ5A014RD8100 |  | Installation of Traffic Signage for Road Network - (RD-A-1 /4)-Z5-A014-RD | 7d | 2028-03-02 | 2028-03-11 | RHD4CZ5A014RD5100, RHD4PRSHLDOSRD1600, RHD4PRSHLSTAGRD1600, RHD4CZ5L016RD8100, RHD4CZ5A014LV3400, RHD4CZ5C061RD8100 |  | -105.02d |
|  | 3727 | **RHD4-02-002-A014-(RD)-Precast Interlocking Block Pavers** |  |  |  |  |  |  |
|  | 3725 | **RHD4-02-002-A014-(RD)-Bituminous concrete wearing course including tack coat (RC2)** |  | 2028-03-05 | 2028-03-08 |  |  |  |
| RHD4CZ5A014RD4100 |  | Supply, lay and compaction Asphaltic wearing course including tack Coat (RC2)for Road Network - (RD-A-1 /4)-Z5-A014-RD | 3d | 2028-03-05 | 2028-03-08 | RHD4CZ5A014RD5100, RHD4CZ5L016RD4100 |  | -111.02d |
|  | 3730 | **RHD4-02-002-A014-(RD)-Speed Table and Wheel Stopper** |  |  |  |  |  |  |
|  | 3728 | **RHD4-02-002-A014-(RD)-Pavement Marking** |  | 2028-03-13 | 2028-03-22 |  |  |  |
| RHD4CZ5A014RD7100 |  | Pavement Markings for Road Network - (RD-A-1 /4)-Z5-A014-RD | 8d | 2028-03-13 | 2028-03-22 | RHD4CZ5A014RD4100, RHD4PRSHLDOSRD1500, RHD4PRSHLSTAGRD1500, RHD4CZ5L016RD7100 |  | -115.02d |
|  | 3546 | **RHD4-02-002-Z5-A014-Storm Network - ST** |  | 2026-08-04 | 2027-02-03 |  |  |  |
|  | 2039 | **RHD4-02-002-A014-(ST)-GRP Pipes - 1000 mm diameter** |  | 2026-08-04 | 2027-01-09 |  |  |  |
| RHD4CZ5A014ST1106 |  | Excavation works for GRP Pipe Line 1000 mm - (RD-A-1 /4)-Z5-A014-ST | 2d | 2026-08-04 A | 2026-08-05 A | RHD4CZ5A014ST3102 | 100% |  |
| RHD4CZ5A014ST1206 |  | Bedding works for GRP Pipe Line 1000 mm - (RD-A-1 /4)-Z5-A014-ST | 2d | 2026-08-05 A | 2026-08-06 A | RHD4CZ5A014ST1106 | 100% |  |
| RHD4CZ5A014ST1306 |  | Installing for GRP Pipe Line 1000 mm - (RD-A-1 /4)-Z5-A014-ST | 2d | 2026-08-08 A | 2026-08-09 A | RHD4CZ5A014ST1206 | 100% |  |
| RHD4CZ5A014ST1506 |  | Backfilling and warning tape works for GRP Pipe Line 1000 mm - (RD-A-1 /4)-Z5-A014-ST | 2d | 2026-08-10 A | 2026-09-12 A | RHD4CZ5A014ST1406 | 100% |  |
| RHD4CZ5A014ST1406 |  | Primary Test for GRP Pipe Line 1000 mm - (RD-A-1 /4)-Z5-A014-ST | 2d | 2027-01-07 | 2027-01-09 | RHD4CZ5A014ST1306 |  | -173d |
|  | 2416 | **RHD4-02-002-A014-(ST)-GRP Pipes - 800 mm diameter** |  | 2026-08-04 | 2027-01-09 |  |  |  |
| RHD4CZ5A014ST1104 |  | Excavation works for GRP Pipe Line 800 mm - (RD-A-1 /4)-Z5-A014-ST | 2d | 2026-08-04 A | 2026-08-06 A | RHD4CZ5A014ST1106 | 100% |  |
| RHD4CZ5A014ST1204 |  | Bedding works for GRP Pipe Line 800 mm - (RD-A-1 /4)-Z5-A014-ST | 2d | 2026-08-06 A | 2026-08-08 A | RHD4CZ5A014ST1104 | 100% |  |
| RHD4CZ5A014ST1304 |  | Installing for GRP Pipe Line 800 mm - (RD-A-1 /4)-Z5-A014-ST | 2d | 2026-08-09 A | 2026-08-10 A | RHD4CZ5A014ST1204 | 100% |  |
| RHD4CZ5A014ST1504 |  | Backfilling and warning tape works for GRP Pipe Line 800 mm - (RD-A-1 /4)-Z5-A014-ST | 2d | 2026-08-11 A | 2026-08-12 A | RHD4CZ5A014ST1404 | 100% |  |
| RHD4CZ5A014ST1404 |  | Primary Test for GRP Pipe Line 800 mm - (RD-A-1 /4)-Z5-A014-ST | 2d | 2027-01-07 | 2027-01-09 | RHD4CZ5A014ST1304 |  | -163d |
|  | 3565 | **RHD4-02-002-A014-(ST)-MH Works - 2000 mm diameter** |  | 2026-08-04 | 2027-01-19 |  |  |  |
| RHD4CZ5A014ST3102 |  | Excavation and PC Blinding works for MH 2000 mm - (RD-A-1 /4)-Z5-A014-ST | 3d | 2026-08-04 A | 2026-08-31 A | RHD4ENSDZ5APPST110, RHD4ENMSST2000, RHD4PRSHLDOSST1003 SS, RHD4PRSHLSTAGPT1300 | 100% |  |
| RHD4CZ5A014ST3202 |  | Installation of Base for MH 2000 mm - (RD-A-1 /4)-Z5-A014-ST | 4d | 2026-08-06 A | 2027-01-09 | RHD4CZ5A014ST3102, RHD4PRSHLSTAGST1604 | 80% | -198d |
| RHD4CZ5A014ST3302 |  | MH Ring and C.Slab works and Backfilling works for MH 2000 mm - (RD-A-1 /4)-Z5-A014-ST | 4d | 2026-09-05 A | 2027-01-13 | RHD4CZ5A014ST3202, RHD4PRSHLDOSST1604 | 80% | -198d |
| RHD4CZ5A014ST3402 |  | Steel Cover for MH 2000 mm - (RD-A-1 /4)-Z5-A014-ST | 2d | 2027-01-14 | 2027-01-16 | RHD4CZ5A014ST3302, RHD4PRSHLDOSST1704, RHD4PRSHLSTAGST1704 |  | -198d |
| RHD4CZ5A014ST3502 |  | Finishing, Benching, Testing works for MH 2000 mm - (RD-A-1 /4)-Z5-A014-ST | 3d | 2027-01-17 | 2027-01-19 | RHD4CZ5A014ST3402 |  | -195d |
|  | 3564 | **RHD4-02-002-A014-(ST)-MH Works - 1500 mm diameter** |  | 2026-08-04 | 2027-01-25 |  |  |  |
| RHD4CZ5A014ST3101 |  | Excavation and PC Blinding works for MH 1500 mm - (RD-A-1 /4)-Z5-A014-ST | 5d | 2026-08-04 A | 2026-08-06 A | RHD4CZ5A014ST3102, RHD4ENSDZ5APPST110, RHD4ENMSST2000 | 100% |  |
| RHD4CZ5A014ST3201 |  | Installation of Base for MH 1500 mm - (RD-A-1 /4)-Z5-A014-ST | 5d | 2026-08-06 A | 2026-09-09 A | RHD4CZ5A014ST3101, RHD4PRSHLSTAGST1604 | 100% |  |
| RHD4CZ5A014ST3301 |  | MH Ring and C.Slab works and Backfilling works for MH 1500 mm - (RD-A-1 /4)-Z5-A014-ST | 5d | 2026-09-05 A | 2026-09-09 A | RHD4CZ5A014ST3201, RHD4PRSHLDOSST1604 | 100% |  |
| RHD4CZ5A014ST3401 |  | Steel Cover for MH 1500 mm - (RD-A-1 /4)-Z5-A014-ST | 3d | 2027-01-17 | 2027-01-19 | RHD4CZ5A014ST3301, RHD4PRSHLDOSST1704, RHD4PRSHLSTAGST1704, RHD4CZ5A014ST3402 |  | -198d |
| RHD4CZ5A014ST3501 |  | Finishing, Benching, Testing works for MH 1500 mm - (RD-A-1 /4)-Z5-A014-ST | 5d | 2027-01-20 | 2027-01-25 | RHD4CZ5A014ST3401 |  | -198d |
|  | 3563 | **RHD4-02-002-A014-(ST)-MH Works - 1200 mm diameter** |  | 2026-08-04 | 2027-01-28 |  |  |  |
| RHD4CZ5A014ST3100 |  | Excavation and PC Blinding works for MH 1200 mm - (RD-A-1 /4)-Z5-A014-ST | 4d | 2026-08-04 A | 2027-01-14 | RHD4CZ5A014ST3101, RHD4ENSDZ5APPST110, RHD4ENMSST2000, RHD4ENMSST2010, RHD4PRSHLSTAGST1002, RHD4PRSHLSTAGST1008, RHD4PRSHLSTAGIRR1400, RHD4PRSHLSTAGIRR1300 | 90% | -196d |
| RHD4CZ5A014ST3200 |  | Installation of Base for MH 1200 mm - (RD-A-1 /4)-Z5-A014-ST | 4d | 2026-08-29 A | 2027-01-20 | RHD4CZ5A014ST3100, RHD4PRSHLSTAGST1604, RHD4CZ6A015RW3000, RHD4PRSHLSTAGLV1400 | 90% | -197.02d |
| RHD4CZ5A014ST3300 |  | MH Ring and C.Slab works and Backfilling works for MH 1200 mm - (RD-A-1 /4)-Z5-A014-ST | 4d | 2026-09-26 A | 2027-01-23 | RHD4CZ5A014ST3200, RHD4PRSHLDOSST1604, RHD4PRSHLSTAGSL1400 | 50% | -197.02d |
| RHD4CZ5A014ST3500 |  | Finishing, Benching, Testing works for MH 1200 mm - (RD-A-1 /4)-Z5-A014-ST | 4d | 2027-01-20 | 2027-01-24 | RHD4CZ5A014ST3502 |  | -195d |
| RHD4CZ5A014ST3400 |  | Steel Cover for MH 1200 mm - (RD-A-1 /4)-Z5-A014-ST | 4d | 2027-01-25 | 2027-01-28 | RHD4CZ5A014ST3300, RHD4PRSHLDOSST1704, RHD4PRSHLSTAGST1704, RHD4CZ5A014ST3401, RHD4CZ5A014ST3500 |  | -195d |
|  | 3558 | **RHD4-02-002-A014-(ST)-GRP Pipes - 1500 mm diameter** |  | 2026-08-04 | 2027-01-25 |  |  |  |
| RHD4CZ5A014ST1111 |  | Excavation works for GRP Pipe Line 1500 mm - (RD-A-1 /4)-Z5-A014-ST | 2d | 2026-08-04 A | 2026-09-04 A | RHD4CZ5A014ST3202, RHD4CZ5A014ST3201, RHD4CZ5A014ST3200, RHD4ENSDZ5APPST110, RHD4CZ5A014ST1506 | 100% |  |
| RHD4CZ5A014ST1211 |  | Bedding works for GRP Pipe Line 1500 mm - (RD-A-1 /4)-Z5-A014-ST | 2d | 2026-08-06 A | 2026-09-06 A | RHD4CZ5A014ST1111 | 100% |  |
| RHD4CZ5A014ST1311 |  | Installing for GRP Pipe Line 1500 mm - (RD-A-1 /4)-Z5-A014-ST | 2d | 2026-08-08 A | 2026-09-07 A | RHD4CZ5A014ST1211, RHD4CZ5A014ST3302, RHD4CZ5A014ST3301, RHD4CZ5A014ST3300, RHD4PRSHLSTAGST1004 | 100% |  |
| RHD4CZ5A014ST1511 |  | Backfilling and warning tape works for GRP Pipe Line 1500 mm - (RD-A-1 /4)-Z5-A014-ST | 2d | 2026-09-07 A | 2026-09-08 A | RHD4CZ5A014ST1411, RHD4CZ5A014ST1504 | 100% |  |
| RHD4CZ5A014ST1411 |  | Primary Test for GRP Pipe Line 1500 mm - (RD-A-1 /4)-Z5-A014-ST | 2d | 2027-01-23 | 2027-01-25 | RHD4CZ5A014ST1311 |  | -176.02d |
|  | 3555 | **RHD4-02-002-A014-(ST)-GRP Pipes - 1200 mm diameter** |  |  |  |  |  |  |
|  | 3554 | **RHD4-02-002-A014-(ST)-GRP Pipes - 1100 mm diameter** |  |  |  |  |  |  |
|  | 3550 | **RHD4-02-002-A014-(ST)-GRP Pipes - 700 mm diameter** |  | 2026-08-06 | 2027-01-23 |  |  |  |
| RHD4CZ5A014ST1103 |  | Excavation works for GRP Pipe Line 700 mm - (RD-A-1 /4)-Z5-A014-ST | 3d | 2026-08-06 A | 2026-09-04 A | RHD4ENSDZ5APPST110, RHD4CZ5A014ST1111 | 100% |  |
| RHD4CZ5A014ST1203 |  | Bedding works for GRP Pipe Line 700 mm - (RD-A-1 /4)-Z5-A014-ST | 3d | 2026-08-09 A | 2026-09-05 A | RHD4CZ5A014ST1103 | 100% |  |
| RHD4CZ5A014ST1303 |  | Installing for GRP Pipe Line 700 mm - (RD-A-1 /4)-Z5-A014-ST | 2d | 2026-08-11 A | 2026-09-06 A | RHD4CZ5A014ST1203, RHD4PRSHLSTAGST1004, RHD4PRSHLDOSST1604, RHD4PRSHLPOST1000, RHD4PRSHLDOSST1004 | 100% |  |
| RHD4CZ5A014ST1503 |  | Backfilling and warning tape works for GRP Pipe Line 700 mm - (RD-A-1 /4)-Z5-A014-ST | 3d | 2026-08-13 A | 2026-10-08 A | RHD4CZ5A014ST1403 | 100% |  |
| RHD4CZ5A014ST1403 |  | Primary Test for GRP Pipe Line 700 mm - (RD-A-1 /4)-Z5-A014-ST | 2d | 2027-01-20 | 2027-01-23 | RHD4CZ5A014ST1303 |  | -167.02d |
|  | 3549 | **RHD4-02-002-A014-(ST)-GRP Pipes - 600 mm diameter** |  | 2026-08-05 | 2027-01-23 |  |  |  |
| RHD4CZ5A014ST1102 |  | Excavation works for GRP Pipe Line 600 mm - (RD-A-1 /4)-Z5-A014-ST | 2d | 2026-08-05 A | 2026-08-06 A | RHD4CZ5A014ST1103, RHD4ENSDZ5APPST110 | 100% |  |
| RHD4CZ5A014ST1202 |  | Bedding works for GRP Pipe Line 600 mm - (RD-A-1 /4)-Z5-A014-ST | 2d | 2026-08-08 A | 2026-08-09 A | RHD4CZ5A014ST1102 | 100% |  |
| RHD4CZ5A014ST1302 |  | Installing for GRP Pipe Line 600 mm - (RD-A-1 /4)-Z5-A014-ST | 2d | 2026-08-10 A | 2026-08-11 A | RHD4CZ5A014ST1202, RHD4PRSHLSTAGST1004, RHD4PRSHLDOSST1604, RHD4PRSHLPOST1000, RHD4PRSHLDOSST1004 | 100% |  |
| RHD4CZ5A014ST1502 |  | Backfilling and warning tape works for GRP Pipe Line 600 mm - (RD-A-1 /4)-Z5-A014-ST | 2d | 2026-08-12 A | 2026-09-08 A | RHD4CZ5A014ST1402, RHD4CZ5A014ST1503 | 100% |  |
| RHD4CZ5A014ST1402 |  | Primary Test for GRP Pipe Line 600 mm - (RD-A-1 /4)-Z5-A014-ST | 2d | 2027-01-20 | 2027-01-23 | RHD4CZ5A014ST1302 |  | -167.02d |

| ID | WBS | Task | Duration | Start | Finish | Predecessors | Complete | Total float |
| --- | --- | --- | --- | --- | --- | --- | --- | --- |
|  | 3548 | **RHD4-02-002-A014-(ST)-GRP Pipes - 500 mm diameter** |  | 2026-08-06 | 2027-01-27 |  |  |  |
| RHD4CZ5A014ST1101 |  | Excavation works for GRP Pipe Line 500 mm - (RD-A-1 /4)-Z5-A014-ST | 2d | 2026-08-06 A | 2026-09-05 A | RHD4CZ5A014ST1102, RHD4ENSDZ5APPST110 | 100% |  |
| RHD4CZ5A014ST1201 |  | Bedding works for GRP Pipe Line 500 mm - (RD-A-1 /4)-Z5-A014-ST | 2d | 2026-08-08 A | 2026-09-07 A | RHD4CZ5A014ST1101 | 100% |  |
| RHD4CZ5A014ST1301 |  | Installing for GRP Pipe Line 500 mm - (RD-A-1 /4)-Z5-A014-ST | 2d | 2026-08-10 A | 2026-09-08 A | RHD4CZ5A014ST1201, RHD4PRSHLSTAGST1004, RHD4PRSHLDOSST1604, RHD4PRSHLPOST1000, RHD4PRSHLDOSST1004 | 100% |  |
| RHD4CZ5A014ST1401 |  | Primary Test for GRP Pipe Line 500 mm - (RD-A-1 /4)-Z5-A014-ST | 2d | 2026-09-08 A | 2026-09-09 A | RHD4CZ5A014ST1301 | 100% |  |
| RHD4CZ5A014ST1501 |  | Backfilling and warning tape works for GRP Pipe Line 500 mm - (RD-A-1 /4)-Z5-A014-ST | 2d | 2027-01-25 | 2027-01-27 | RHD4CZ5A014ST1401, RHD4CZ5A014ST1511 |  | -176.02d |
|  | 3547 | **RHD4-02-002-A014-(ST)-GRP Pipes - 400 mm diameter** |  | 2026-08-06 | 2027-01-23 |  |  |  |
| RHD4CZ5A014ST1100 |  | Excavation works for GRP Pipe Line 400 mm - (RD-A-1 /4)-Z5-A014-ST | 2d | 2026-08-06 A | 2026-09-04 A | RHD4CZ5A014ST1101, RHD4ENSDZ5APPST110 | 100% |  |
| RHD4CZ5A014ST1200 |  | Bedding works for GRP Pipe Line 400 mm - (RD-A-1 /4)-Z5-A014-ST | 2d | 2026-08-08 A | 2026-09-06 A | RHD4CZ5A014ST1100 | 100% |  |
| RHD4CZ5A014ST1300 |  | Installing for GRP Pipe Line 400 mm - (RD-A-1 /4)-Z5-A014-ST | 2d | 2026-08-10 A | 2026-09-07 A | RHD4CZ5A014ST1200, RHD4PRSHLSTAGST1004, RHD4PRSHLDOSST1604, RHD4PRSHLPOST1000, RHD4PRSHLDOSST1004 | 100% |  |
| RHD4CZ5A014ST1500 |  | Backfilling and warning tape works for GRP Pipe Line 400 mm - (RD-A-1 /4)-Z5-A014-ST | 2d | 2026-08-12 A | 2026-09-08 A | RHD4CZ5A014ST1400, RHD4CZ5A014ST1501 | 100% |  |
| RHD4CZ5A014ST1400 |  | Primary Test for GRP Pipe Line 400 mm - (RD-A-1 /4)-Z5-A014-ST | 2d | 2027-01-20 | 2027-01-23 | RHD4CZ5A014ST1300 |  | -172.02d |
|  | 3562 | **RHD4-02-002-A014-(ST)-UPVC Pipes - 400 mm diameter** |  | 2026-08-17 | 2027-01-25 |  |  |  |
| RHD4CZ5A014ST2101 |  | Excavation works for UPVC Pipe Line 400 mm - (RD-A-1 /4)-Z5-A014-ST | 2d | 2026-08-17 A | 2026-08-18 A | RHD4CZ5A014ST3300, RHD4CZ5A014ST3301, RHD4ENSDZ5APPST110 | 100% |  |
| RHD4CZ5A014ST2201 |  | Bedding works for UPVC Pipe Line 400 mm - (RD-A-1 /4)-Z5-A014-ST | 2d | 2026-08-20 A | 2026-08-22 A | RHD4CZ5A014ST2101 | 100% |  |
| RHD4CZ5A014ST2301 |  | Installing for UPVC Pipe Line 400 mm - (RD-A-1 /4)-Z5-A014-ST | 2d | 2026-08-22 A | 2026-08-23 A | RHD4CZ5A014ST2201, RHD4PRSHLDOSST1104, RHD4PRSHLSTAGST1104 | 100% |  |
| RHD4CZ5A014ST2501 |  | Backfilling and warning tape works for UPVC Pipe Line 400 mm - (RD-A-1 /4)-Z5-A014-ST | 2d | 2026-09-01 A | 2026-09-02 A | RHD4CZ5A014ST2401, RHD4CZ5A014ST6100 | 100% |  |
| RHD4CZ5A014ST2401 |  | Primary Test for UPVC Pipe Line 400 mm - (RD-A-1 /4)-Z5-A014-ST | 2d | 2027-01-23 | 2027-01-25 | RHD4CZ5A014ST2301 |  | -176.02d |
|  | 3561 | **RHD4-02-002-A014-(ST)-UPVC Pipes - 300 mm diameter** |  | 2026-08-04 | 2027-02-01 |  |  |  |
| RHD4CZ5A014ST2100 |  | Excavation works for UPVC Pipe Line 300 mm - (RD-A-1 /4)-Z5-A014-ST | 6d | 2026-08-04 A | 2027-01-24 | RHD4CZ5A014ST2101, RHD4CZ5A014ST3300, RHD4CZ5A014ST3301, RHD4ENSDZ5APPST110 | 66% | -177.02d |
| RHD4CZ5A014ST2200 |  | Bedding works for UPVC Pipe Line 300 mm - (RD-A-1 /4)-Z5-A014-ST | 5d | 2026-08-06 A | 2027-01-25 | RHD4CZ5A014ST2100, RHD4CZ5A014ST2201 | 74% | -177.02d |
| RHD4CZ5A014ST2300 |  | Installing for UPVC Pipe Line 300 mm - (RD-A-1 /4)-Z5-A014-ST | 6d | 2026-08-08 A | 2027-01-26 | RHD4CZ5A014ST2200, RHD4CZ5A014ST2301, RHD4PRSHLDOSST1104, RHD4PRSHLSTAGST1104 | 76% | -177.02d |
| RHD4CZ5A014ST2500 |  | Backfilling and warning tape works for UPVC Pipe Line 300 mm - (RD-A-1 /4)-Z5-A014-ST | 7d | 2026-08-10 A | 2027-02-01 | RHD4CZ5A014ST2400, RHD4CZ5A014ST2501, RHD4CZ5A014ST6100, RHD4CZ5A014ST5401 | 74% | -177.02d |
| RHD4CZ5A014ST2400 |  | Primary Test for UPVC Pipe Line 300 mm - (RD-A-1 /4)-Z5-A014-ST | 4d | 2027-01-26 | 2027-01-31 | RHD4CZ5A014ST2300, RHD4CZ5A014ST2401 |  | -177.02d |
|  | 3566 | **RHD4-02-002-A014-(ST)-Discharge Chamber - 1500*1200 mm** |  | 2027-01-20 | 2027-01-30 |  |  |  |
| RHD4CZ5A014ST5101 |  | Excavation+Bedding for Discharge Chamber With GRP 800 mm Dia - 1500*1200 mm - (RD-A-1 /4)-Z5-A014-ST | 2d | 2027-01-20 | 2027-01-23 | RHD4CZ5A014ST1300, RHD4ENSDZ5APPST110, RHD4ENMSEW2000, RHD4ENMSEW2010, RHD4ENSDZ7APPEW100 SS |  | -177.02d |
| RHD4CZ5A014ST5201 |  | PC works for Discharge Chamber With GRP 800 mm Dia - 1500*1200 mm - (RD-A-1 /4)-Z5-A014-ST | 2d | 2027-01-23 | 2027-01-25 | RHD4CZ5A014ST5101 |  | -176.02d |
| RHD4CZ5A014ST5301 |  | Installation for Discharge Chamber With GRP 800 mm Dia - 1500*1200 mm - (RD-A-1 /4)-Z5-A014-ST | 2d | 2027-01-25 | 2027-01-27 | RHD4CZ5A014ST5201 |  | -176.02d |
| RHD4CZ5A014ST5401 |  | Backfilling works for Discharge Chamber With GRP 800 mm Dia - 1500*1200 mm - (RD-A-1 /4)-Z5-A014-ST | 2d | 2027-01-27 | 2027-01-30 | RHD4CZ5A014ST5301, RHD4CZ5A014ST1500 |  | -176.02d |
|  | 3567 | **RHD4-02-002-A014-(ST)-HDPE Force Main Pipeline - 200 mm diameter** |  | 2027-01-23 | 2027-02-03 |  |  |  |
| RHD4CZ5A014ST9100 |  | Excavation works for HDPE Force Main Pipeline 200 mm - (RD-A-1 /4)-Z5-A014-ST | 2d | 2027-01-23 | 2027-01-25 | RHD4ENSDZ5APPST110, RHD4CZ5A014ST5101, RHD4CZ5A014RD3100 |  | -177.02d |
| RHD4CZ5A014ST9200 |  | Bedding works for HDPE Force Main Pipeline 200 mm - (RD-A-1 /4)-Z5-A014-ST | 2d | 2027-01-25 | 2027-01-27 | RHD4CZ5A014ST9100 |  | -177.02d |
| RHD4CZ5A014ST9300 |  | Installing for HDPE Force Main Pipeline 200 mm - (RD-A-1 /4)-Z5-A014-ST | 2d | 2027-01-27 | 2027-01-30 | RHD4CZ5A014ST9200, RHD4CZ7C02ST4600 |  | -177.02d |
| RHD4CZ5A014ST9400 |  | Primary Test for HDPE Force Main Pipeline 200 mm - (RD-A-1 /4)-Z5-A014-ST | 2d | 2027-01-30 | 2027-02-01 | RHD4CZ5A014ST9300 |  | -177.02d |
| RHD4CZ5A014ST9500 |  | Backfilling and warning tape works for HDPE Force Main Pipeline 200 mm - (RD-A-1 /4)-Z5-A014-ST | 2d | 2027-02-01 | 2027-02-03 | RHD4CZ5A014ST9400 |  | -177.02d |
|  | 3569 | **RHD4-02-002-A014-(ST)-Concrete Encasement** |  | 2026-09-05 | 2027-01-27 |  |  |  |
| RHD4CZ5A014ST6100 |  | Pipe Encasement for Storm Pipelines - (RD-A-1 /4)-Z5-A014-ST | 2d | 2026-09-05 A | 2027-01-27 | RHD4CZ5A014ST2201, RHD4CZ5A014ST2200 | 50% | -174.02d |
|  | 3570 | **RHD4-02-002-Z5-A014-Catch Basin - ST** |  | 2026-08-04 | 2027-02-20 |  |  |  |
|  | 3571 | **RHD4-02-002-A014-(ST)-Single Catch Basin Works** |  | 2026-08-04 | 2027-02-17 |  |  |  |
| RHD4CZ5A014ST7100 |  | Excavation works for Single Catch Basin - (RD-A-1 /4)-Z5-A014-ST | 5d | 2026-08-04 A | 2026-09-04 A | RHD4CZ5A014ST3300, RHD4CZ5A014ST3301, RHD4ENSDZ5APPST110 | 100% |  |
| RHD4CZ5A014ST7200 |  | PC Blinding, Installation and Pipe connection for Single Catch Basin - (RD-A-1 /4)-Z5-A014-ST | 5d | 2026-08-06 A | 2026-09-06 A | RHD4CZ5A014ST7100 | 100% |  |
| RHD4CZ5A014ST7300 |  | Rings & C.Slab & Final Backfill for Single Catch Basin - (RD-A-1 /4)-Z5-A014-ST | 7d | 2026-09-07 A | 2027-01-31 | RHD4CZ5A014ST7200 | 50% | -197.02d |
| RHD4CZ5A014ST7400 |  | Steel Cover for Single Catch Basin - (RD-A-1 /4)-Z5-A014-ST | 5d | 2027-01-31 | 2027-02-06 | RHD4CZ5A014ST7300, RHD4PRSHLDOSST1704 |  | -197.02d |
| RHD4CZ5A014ST7500 |  | Finishing and Insulation works for Single Catch Basin - (RD-A-1 /4)-Z5-A014-ST | 10d | 2027-02-06 | 2027-02-17 | RHD4CZ5A014ST7400 |  | -197.02d |
|  | 3572 | **RHD4-02-002-A014-(ST)-Double Catch Basin Works** |  | 2026-08-04 | 2027-02-20 |  |  |  |
| RHD4CZ5A014ST8100 |  | Excavation works for Double Catch Basin - (RD-A-1 /4)-Z5-A014-ST | 2d | 2026-08-04 A | 2026-08-06 A | RHD4CZ5A014ST3300, RHD4CZ5A014ST3301, RHD4ENSDZ5APPST110, RHD4CZ5A014ST7100 | 100% |  |
| RHD4CZ5A014ST8200 |  | PC Blinding, Installation and Pipe connection for Double Catch Basin - (RD-A-1 /4)-Z5-A014-ST | 2d | 2026-08-18 A | 2026-08-19 A | RHD4CZ5A014ST8100, RHD4CZ5A014ST7200 | 100% |  |
| RHD4CZ5A014ST8300 |  | Rings & C.Slab & Final Backfillfor Double Catch Basin - (RD-A-1 /4)-Z5-A014-ST | 2d | 2026-09-05 A | 2026-09-06 A | RHD4CZ5A014ST8200, RHD4PRSHLDOSST1304, RHD4CZ5A014ST7300, RHD4PRSHLSTAGST1304 | 100% |  |
| RHD4CZ5A014ST8400 |  | Steel Cover for Double Catch Basin - (RD-A-1 /4)-Z5-A014-ST | 2d | 2027-01-31 | 2027-02-02 | RHD4CZ5A014ST8300, RHD4CZ5A014ST7400 SS, RHD4PRSHLDOSST1704 |  | -197.02d |
| RHD4CZ5A014ST8500 |  | Finishing and Insulation works for Double Catch Basin - (RD-A-1 /4)-Z5-A014-ST | 2d | 2027-02-17 | 2027-02-20 | RHD4CZ5A014ST8400, RHD4CZ5A014ST7500 |  | -197.02d |
|  | 3595 | **RHD4-02-002-Z5-A014-Sewage Network - SW** |  | 2026-08-11 | 2027-02-17 |  |  |  |
|  | 4361 | **RHD4-02-002-A014-(SW)-MH Works - 1200 mm diameter** |  | 2026-09-05 | 2027-02-17 |  |  |  |
| RHD4CZ5A014SW3100 |  | Excavation and PC Blinding works for MH 1200 mm - (RD-A-1 /4)-Z5-A014-SW | 3d | 2026-09-05 A | 2027-02-04 | RHD4CZ5A014SW2100, RHD4CZ5A014ST2500 | 80% | -148.02d |
| RHD4CZ5A014SW3200 |  | Installation of Base for MH 1200 mm - (RD-A-1 /4)-Z5-A014-SW | 3d | 2026-09-06 A | 2027-02-08 | RHD4CZ5A014SW3100 | 80% | -148.02d |
| RHD4CZ5A014SW3300 |  | MH Ring and C.Slab works and Backfilling works for MH 1200 mm - (RD-A-1 /4)-Z5-A014-SW | 3d | 2026-09-07 A | 2027-02-11 | RHD4CZ5A014SW3200 | 80% | -148.02d |
| RHD4CZ5A014SW3400 |  | Steel Cover for MH 1200 mm - (RD-A-1 /4)-Z5-A014-SW | 2d | 2027-02-11 | 2027-02-14 | RHD4CZ5A014SW3300 |  | -148.02d |
| RHD4CZ5A014SW3500 |  | Finishing, Benching, Testing works for MH 1200 mm - (RD-A-1 /4)-Z5-A014-SW | 3d | 2027-02-14 | 2027-02-17 | RHD4CZ5A014SW3400 |  | -148.02d |
|  | 3601 | **RHD4-02-002-A014-(SW)-UPVC Pipes - 200 mm diameter** |  | 2026-08-11 | 2027-02-03 |  |  |  |
| RHD4CZ5A014SW2100 |  | Excavation works for UPVC Pipe Line 200 mm - (RD-A-1 /4)-Z5-A014-SW | 2d | 2026-08-11 A | 2026-09-06 A | RHD4ENSDZ5APPSW120, RHD4CZ5A014ST3101, RHD4CZ5A014ST2500 | 100% |  |
| RHD4CZ5A014SW2200 |  | Bedding works for UPVC Pipe Line 200 mm - (RD-A-1 /4)-Z5-A014-SW | 2d | 2026-08-12 A | 2026-09-08 A | RHD4CZ5A014SW2100 | 100% |  |
| RHD4CZ5A014SW2300 |  | Installing for UPVC Pipe Line 200 mm - (RD-A-1 /4)-Z5-A014-SW | 2d | 2026-08-15 A | 2026-09-09 A | RHD4CZ5A014SW2200, RHD4PRSHLPOSW1000, RHD4PRSHLDOSSW1004, RHD4PRSHLDOSSW1304, RHD4PRSHLPOSW1100, RHD4PRSHLDOSSW1104 | 100% |  |
| RHD4CZ5A014SW2500 |  | Backfilling and warning tape works for UPVC Pipe Line 200 mm - (RD-A-1 /4)-Z5-A014-SW | 2d | 2026-08-17 A | 2026-09-19 A | RHD4CZ5A014SW2400 | 100% |  |
| RHD4CZ5A014SW2400 |  | Primary Test for UPVC Pipe Line 200 mm - (RD-A-1 /4)-Z5-A014-SW | 2d | 2027-02-01 | 2027-02-03 | RHD4CZ5A014SW2300 |  | -177.02d |
|  | 3604 | **RHD4-02-002-A014-(SW)-Concrete Encasement** |  |  |  |  |  |  |
|  | 3632 | **RHD4-02-002-Z5-A014-Potable Network - PT** |  | 2027-02-03 | 2027-04-01 |  |  |  |
|  | 3635 | **RHD4-02-002-A014-(PT)-HDPE Pipes - 200 mm diameter** |  | 2027-02-03 | 2027-03-06 |  |  |  |
| RHD4CZ5A014PT1102 |  | Excavation works for HDPE Pipline 200 mm - (RD-A-1 /4)-Z5-A014-PT | 5d | 2027-02-03 | 2027-02-09 | RHD4CZ5A014SW2500, RHD4ENSDZ5APPPT130, RHD4ENMSPT2000, RHD4CZ5A014ST9500, RHD4CZ5A014ST1502 |  | -177.02d |
| RHD4CZ5A014PT1202 |  | Bedding works for HDPE Pipline 200 mm - (RD-A-1 /4)-Z5-A014-PT | 4d | 2027-02-09 | 2027-02-14 | RHD4CZ5A014PT1102 |  | -170.02d |
| RHD4CZ5A014PT1302 |  | Installing for HDPE Pipline 200 mm - (RD-A-1 /4)-Z5-A014-PT | 7d | 2027-02-14 | 2027-02-23 | RHD4CZ5A014PT1202, RHD4PRSHLDOSPT1000, RHD4PRSHLSTAGPT1000 |  | -170.02d |
| RHD4CZ5A014PT1402 |  | Primary Test for HDPE Pipline 200 mm - (RD-A-1 /4)-Z5-A014-PT | 3d | 2027-02-23 | 2027-02-27 | RHD4CZ5A014PT1302 |  | -170.02d |

| ID | WBS | Task | Duration | Start | Finish | Predecessors | Complete | Total float |
| --- | --- | --- | --- | --- | --- | --- | --- | --- |
| RHD4CZ5A014PT1502 |  | Backfilling and warning tape works for HDPE Pipline 200 mm - (RD-A-1 /4)-Z5-A014-PT | 6d | 2027-02-27 | 2027-03-06 | RHD4CZ5A014PT1402 |  | -170.02d |
|  | 2692 | **RHD4-02-002-A014-(PT)-Gate Valves (Direct Buried)** |  | 2027-02-23 | 2027-02-28 |  |  |  |
| RHD4CZ5A014PT3100 |  | Installation for Direct Buried Gate Valves - (RD-A-1 /4)-Z5-A014-PT | 2d | 2027-02-23 | 2027-02-25 | RHD4CZ5A014PT1302 |  | -168.02d |
| RHD4CZ5A014PT3200 |  | Stem and Service box for Direct Buried Gate Valves - (RD-A-1 /4)-Z5-A014-PT | 2d | 2027-02-25 | 2027-02-28 | RHD4CZ5A014PT3100 |  | -168.02d |
|  | 3642 | **RHD4-02-002-A014-(PT)-Wash out Valves** |  | 2027-03-16 | 2027-03-24 |  |  |  |
| RHD4CZ5A014PT3102 |  | Installation for Wash out Valves for Potable Water Network - (RD-A-1 /4)-Z5-A014-PT | 2d | 2027-03-16 | 2027-03-18 | RHD4CZ5A014PT2301, RHD4PRSHLDOSPT1200, RHD4PRSHLSTAGPT1200, RHD4CZ5A014SW3500 |  | -167.02d |
| RHD4CZ5A014PT3202 |  | Stem and Service box for Wash out Valves for Potable Water Network - (RD-A-1 /4)-Z5-A014-PT | 2d | 2027-03-22 | 2027-03-24 | RHD4CZ5A014PT3102, RHD4CZ5A014PT2401, RHD4PRSHLDOSPT1300, RHD4PRSHLSTAGPT1300, RHD4CZ5A014LV2400, RHD4CZ5A014SL2400 |  | -170.02d |
|  | 3643 | **RHD4-02-002-A014-(PT)-Air Valve Chambers** |  | 2027-03-06 | 2027-03-18 |  |  |  |
| RHD4CZ5A014PT2102 |  | Excavation and Bedding for Air Valve Chambers for Potable Water Network - (RD-A-1 /4)-Z5-A014-PT | 2d | 2027-03-06 | 2027-03-08 | RHD4CZ5A014PT1502, RHD4ENSDZ5APPPT130 |  | -168.02d |
| RHD4CZ5A014PT2202 |  | PC works for Air Valve Chambers for Potable Water Network - (RD-A-1 /4)-Z5-A014-PT | 2d | 2027-03-08 | 2027-03-14 | RHD4CZ5A014PT2102 |  | -168.02d |
| RHD4CZ5A014PT2302 |  | Installation for Air Valve Chambers for Potable Water Network - (RD-A-1 /4)-Z5-A014-PT | 2d | 2027-03-14 | 2027-03-16 | RHD4CZ5A014PT2202, RHD4PRSHLDOSPT1100, RHD4PRSHLDOSPT1400, RHD4PRSHLSTAGPT1100, RHD4PRSHLSTAGPT1400 |  | -168.02d |
| RHD4CZ5A014PT2402 |  | Backfilling works for Air Valve Chambers for Potable Water Network - (RD-A-1 /4)-Z5-A014-PT | 2d | 2027-03-16 | 2027-03-18 | RHD4CZ5A014PT2302 |  | -168.02d |
|  | 3644 | **RHD4-02-002-A014-(PT)-Air Valves** |  | 2027-03-16 | 2027-04-01 |  |  |  |
| RHD4CZ5A014PT3103 |  | Installation for Air Valves for Potable Water Network - (RD-A-1 /4)-Z5-A014-PT | 2d | 2027-03-16 | 2027-03-18 | RHD4CZ5A014PT2302, RHD4PRSHLDOSPT1200, RHD4PRSHLSTAGPT1200 |  | -168.02d |
| RHD4CZ5A014PT3203 |  | Stem and Service box for Air Valves for Potable Water Network - (RD-A-1 /4)-Z5-A014-PT | 3d | 2027-03-29 | 2027-04-01 | RHD4CZ5A014PT3103, RHD4CZ5A014PT2402, RHD4PRSHLDOSPT1300, RHD4PRSHLSTAGPT1300, RHD4CZ5A014IRR1503 |  | -177.02d |
|  | 3645 | **RHD4-02-002-A014-(PT)-Fire Hydrant** |  | 2027-03-06 | 2027-03-22 |  |  |  |
| RHD4CZ5A014PT4100 |  | Excavation and Bedding and Pipe Installation for Fire Hydrant - (RD-A-1 /4)-Z5-A014-PT | 3d | 2027-03-06 | 2027-03-13 | RHD4CZ5A014PT1502, RHD4ENSDZ5APPPT130 |  | -168.02d |
| RHD4CZ5A014PT4200 |  | Valve Installation for Fire Hydrant - (RD-A-1 /4)-Z5-A014-PT | 2d | 2027-03-13 | 2027-03-15 | RHD4CZ5A014PT4100 |  | -168.02d |
| RHD4CZ5A014PT4300 |  | Stem for Fire Hydrant - (RD-A-1 /4)-Z5-A014-PT | 2d | 2027-03-15 | 2027-03-17 | RHD4CZ5A014PT4200 |  | -168.02d |
| RHD4CZ5A014PT4400 |  | Fire Installation for Fire Hydrant - (RD-A-1 /4)-Z5-A014-PT | 2d | 2027-03-17 | 2027-03-20 | RHD4CZ5A014PT4300, RHD4PRSHLDOSPT1500, RHD4PRSHLSTAGPT1500 |  | -168.02d |
| RHD4CZ5A014PT4500 |  | Protection Barriers for Fire Hydrant - (RD-A-1 /4)-Z5-A014-PT | 2d | 2027-03-20 | 2027-03-22 | RHD4CZ5A014PT4400 |  | -168.02d |
|  | 3646 | **RHD4-02-002-A014-(PT)-Concrete Encasement** |  |  |  |  |  |  |
|  | 3641 | **RHD4-02-002-A014-(PT)-Wash out Valve Chambers** |  | 2027-03-06 | 2027-03-22 |  |  |  |
| RHD4CZ5A014PT2101 |  | Excavation and Bedding for Wash out Valve Chambers for Potable Water Network - (RD-A-1 /4)-Z5-A014-PT | 2d | 2027-03-06 | 2027-03-08 | RHD4CZ5A014PT1502, RHD4ENSDZ5APPPT130, RHD4CZ5A014PT1502 FF, RHD4CZ5A014PT3200 |  | -170.02d |
| RHD4CZ5A014PT2201 |  | PC works for Wash out Valve Chambers for Potable Water Network - (RD-A-1 /4)-Z5-A014-PT | 2d | 2027-03-08 | 2027-03-14 | RHD4CZ5A014PT2101 |  | -170.02d |
| RHD4CZ5A014PT2301 |  | Installation for Wash out Valve Chambers for Potable Water Network - (RD-A-1 /4)-Z5-A014-PT | 2d | 2027-03-14 | 2027-03-16 | RHD4CZ5A014PT2201, RHD4PRSHLDOSPT1100, RHD4PRSHLDOSPT1400, RHD4PRSHLSTAGPT1100, RHD4PRSHLSTAGPT1400 |  | -170.02d |
| RHD4CZ5A014PT2401 |  | Backfilling works for Wash out Valve Chambers for Potable Water Network - (RD-A-1 /4)-Z5-A014-PT | 5d | 2027-03-16 | 2027-03-22 | RHD4CZ5A014PT2301 |  | -170.02d |
|  | 3647 | **RHD4-02-002-Z5-A014-Irrigation Network - IRR** |  | 2026-08-04 | 2027-03-29 |  |  |  |
|  | 3651 | **RHD4-02-002-A014-(IRR)-HDPE Pipes - 250 mm diameter** |  | 2027-02-09 | 2027-03-29 |  |  |  |
| RHD4CZ5A014IRR1103 |  | Excavation works for HDPE Pipline 250 mm - (RD-A-1 /4)-Z5-A014-IRR | 7d | 2027-02-09 | 2027-02-17 | RHD4ENSDZ5APPIRR140, RHD4ENMSRR2000, RHD4CZ5A014PT1102 |  | -177.02d |
| RHD4CZ5A014IRR1203 |  | Bedding works for HDPE Pipline 250 mm - (RD-A-1 /4)-Z5-A014-IRR | 6d | 2027-02-17 | 2027-02-25 | RHD4CZ5A014IRR1103 |  | -171.02d |
| RHD4CZ5A014IRR1303 |  | Installing for HDPE Pipline 250 mm - (RD-A-1 /4)-Z5-A014-IRR | 7d | 2027-02-25 | 2027-03-06 | RHD4CZ5A014IRR1203 |  | -171.02d |
| RHD4CZ5A014IRR1403 |  | Primary Test for HDPE Pipline 250 mm - (RD-A-1 /4)-Z5-A014-IRR | 3d | 2027-03-06 | 2027-03-13 | RHD4CZ5A014IRR1303 |  | -171.02d |
| RHD4CZ5A014IRR1503 |  | Backfilling and warning tape works for HDPE Pipline 250 mm - (RD-A-1 /4)-Z5-A014-IRR | 8d | 2027-03-20 | 2027-03-29 | RHD4CZ5A014IRR1403, RHD4CZ5A014MV2400 |  | -177.02d |
|  | 1770 | **RHD4-02-002-A014-(IRR)-Air Valves** |  | 2027-02-25 | 2027-03-02 |  |  |  |
| RHD4CZ5A014IRR3103 |  | Installation for Air Valves for Irrigation Network - (RD-A-1 /4)-Z5-A014-IRR | 2d | 2027-02-25 | 2027-02-28 | RHD4CZ5A014IRR2302 |  | -162.02d |
| RHD4CZ5A014IRR3203 |  | Stem and Service box for Air Valves for Irrigation Network - (RD-A-1 /4)-Z5-A014-IRR | 2d | 2027-02-28 | 2027-03-02 | RHD4CZ5A014IRR3103, RHD4CZ5A014IRR2402 |  | -162.02d |
|  | 3663 | **RHD4-02-002-A014-(IRR)-Concrete Encasement** |  |  |  |  |  |  |
|  | 6107 | **RHD4-02-002-A014-(IRR)-HDPE Pipes - 160 mm diameter** |  | 2026-08-04 | 2027-02-20 |  |  |  |
| RHD4CZ5A014IRR1100 |  | Excavation works for HDPE Pipline 160 mm - (RD-A-1 /4)-Z5-A014-IRR | 2d | 2026-08-04 A | 2026-08-05 A | RHD4CZ5A014IRR1103 | 100% |  |
| RHD4CZ5A014IRR1200 |  | Bedding works for HDPE Pipline 160 mm - (RD-A-1 /4)-Z5-A014-IRR | 2d | 2026-08-06 A | 2026-08-08 A | RHD4CZ5A014IRR1100 | 100% |  |
| RHD4CZ5A014IRR1300 |  | Installing for HDPE Pipline 160 mm - (RD-A-1 /4)-Z5-A014-IRR | 2d | 2026-08-08 A | 2026-08-09 A | RHD4CZ5A014IRR1200 | 100% |  |
| RHD4CZ5A014IRR1500 |  | Backfilling and warning tape works for HDPE Pipline 160 mm - (RD-A-1 /4)-Z5-A014-IRR | 2d | 2026-09-05 A | 2026-09-06 A | RHD4CZ5A014IRR1400 | 100% |  |
| RHD4CZ5A014IRR1400 |  | Primary Test for HDPE Pipline 160 mm - (RD-A-1 /4)-Z5-A014-IRR | 2d | 2027-02-17 | 2027-02-20 | RHD4CZ5A014IRR1300 |  | -162.02d |
|  | 6115 | **RHD4-02-002-A014-(IRR)-Gate Valves (Direct Buried)** |  | 2027-02-17 | 2027-02-25 |  |  |  |
| RHD4CZ5A014IRR3100 |  | Installation for Direct Buried Gate Valves - (RD-A-1 /4)-Z5-A014-IRR | 3d | 2027-02-17 | 2027-02-21 | RHD4CZ5A014IRR1300 SS, RHD4CZ5A014IRR1300 FF |  | -158.02d |
| RHD4CZ5A014IRR3200 |  | Stem and Service box for Direct Buried Gate Valves - (RD-A-1 /4)-Z5-A014-IRR | 3d | 2027-02-21 | 2027-02-25 | RHD4CZ5A014IRR3100, RHD4CZ5A014IRR1500 |  | -158.02d |
|  | 1769 | **RHD4-02-002-A014-(IRR)-Air Valve Chamber** |  | 2027-02-17 | 2027-02-28 |  |  |  |
| RHD4CZ5A014IRR2102 |  | Excavation and Bedding for Valve Chamber for Irrigation Network - (RD-A-1 /4)-Z5-A014-IRR | 2d | 2027-02-17 | 2027-02-20 | RHD4CZ5A014IRR1103 |  | -162.02d |
| RHD4CZ5A014IRR2202 |  | PC works for Valve Chamber for Irrigation Network - (RD-A-1 /4)-Z5-A014-IRR | 2d | 2027-02-20 | 2027-02-23 | RHD4CZ5A014IRR2102 |  | -162.02d |
| RHD4CZ5A014IRR2302 |  | Installation for Valve Chamber for Irrigation Network - (RD-A-1 /4)-Z5-A014-IRR | 2d | 2027-02-23 | 2027-02-25 | RHD4CZ5A014IRR2202 |  | -162.02d |
| RHD4CZ5A014IRR2402 |  | Backfilling works for Valve Chamber for Irrigation Network - (RD-A-1 /4)-Z5-A014-IRR | 2d | 2027-02-25 | 2027-02-28 | RHD4CZ5A014IRR2302 |  | -162.02d |
|  | 3681 | **RHD4-02-002-Z5-A014-Medium Voltage Network - MV** |  | 2026-08-04 | 2027-09-07 |  |  |  |
|  | 3682 | **RHD4-02-002-A014-(MV)-Medium Voltage cable trench** |  | 2027-07-17 | 2027-09-07 |  |  |  |
| RHD4CZ5A014MV1100 |  | Excavation for Medium Voltage Trench - (RD-A-1 /4)-Z5-A014-MV | 6d | 2027-07-17 | 2027-07-24 | RHD4ENSDZ5APPMV150, RHD4CZ5A014RD3100, RHD4CZ5L016MV3401 |  | -153.02d |
| RHD4CZ5A014MV1200 |  | Trench Backfilling for Medium Voltage Network - (RD-A-1 /4)-Z5-A014-MV | 6d | 2027-08-31 | 2027-09-07 | RHD4CZ5A014MV4200 |  | -109.02d |
|  | 3683 | **RHD4-02-002-A014-(MV)-Medium Voltage duct banks** |  | 2026-08-04 | 2027-03-20 |  |  |  |
| RHD4CZ5A014MV2100 |  | Excavation of Duct Banks for Medium Voltage Network - (RD-A-1 /4)-Z5-A014-MV | 2d | 2026-08-04 A | 2027-02-23 | RHD4ENSDZ5APPMV150, RHD4CZ5A014IRR1100 SS | 38% | -177.02d |
| RHD4CZ5A014MV2200 |  | Installation of Duct Banks for Medium Voltage Network - (RD-A-1 /4)-Z5-A014-MV | 2d | 2026-08-06 A | 2027-03-02 | RHD4CZ5A014MV2100, RHD4PRSHLDOSMV1000, RHD4PRSHLSTAGMV1000 | 38% | -177.02d |
| RHD4CZ5A014MV2300 |  | Pouring of Duct Banks for Medium Voltage Network - (RD-A-1 /4)-Z5-A014-MV | 2d | 2026-08-09 A | 2027-03-13 | RHD4CZ5A014MV2200 | 38% | -177.02d |
| RHD4CZ5A014MV2400 |  | Backfilling of Duct Banks for Medium Voltage Network - (RD-A-1 /4)-Z5-A014-MV | 2d | 2026-08-11 A | 2027-03-20 | RHD4CZ5A014MV2300 | 38% | -177.02d |
|  | 3684 | **RHD4-02-002-A014-(MV)-Medium Voltage cables 3Cx 500 mm²** |  | 2027-07-24 | 2027-08-25 |  |  |  |
| RHD4CZ5A014MV3100 |  | Installation of Medium Voltage Cables 3Cx 500 mm² - (RD-A-1 /4)-Z5-A014-MV | 12d | 2027-07-24 | 2027-08-07 | RHD4CZ5A014MV1100, RHD4PRSHLDOSMV1100, RHD4ENMSMV2000, RHD4ENMSMV2010, RHD4PRSHLSTAGMV1100 |  | -109.02d |
| RHD4CZ5A014MV3200 |  | Joints Installation of Medium Voltage Cables 3Cx 500 mm² - (RD-A-1 /4)-Z5-A014-MV | 6d | 2027-08-07 | 2027-08-14 | RHD4CZ5A014MV3100, RHD4PRSHLDOSMV1300, RHD4PRSHLSTAGMV1300 |  | -109.02d |
| RHD4CZ5A014MV3300 |  | Testing of Medium Voltage Cables 3Cx 500 mm² - (RD-A-1 /4)-Z5-A014-MV | 8d | 2027-08-14 | 2027-08-23 | RHD4CZ5A014MV3200 |  | -109.02d |
| RHD4CZ5A014MV3400 |  | Termination of Medium Voltage Cables 3Cx 500 mm² - (RD-A-1 /4)-Z5-A014-MV | 2d | 2027-08-23 | 2027-08-25 | RHD4CZ5A014MV3300 |  | -108.02d |
|  | 3685 | **RHD4-02-002-A014-(MV)-Medium Voltage cables 3Cx 50 mm²** |  | 2027-08-23 | 2027-08-26 |  |  |  |
| RHD4CZ5A014MV3401 |  | Termination of Medium Voltage Cables 3Cx 50 mm² - (RD-A-1 /4)-Z5-A014-MV | 3d | 2027-08-23 | 2027-08-26 | RHD4CZ5A014MV3300 |  | -109.02d |
|  | 3686 | **RHD4-02-002-A014-(MV)-Normally open Point (Outdoor Type)** |  | 2027-08-26 | 2027-08-31 |  |  |  |
| RHD4CZ5A014MV4100 |  | Installation for Normally open Point - (RD-A-1 /4)-Z5-A014-MV | 2d | 2027-08-26 | 2027-08-29 | RHD4PRSHLDOSMV1400, RHD4PRSHLSTAGMV1400, RHD4CZ5A014MV3400, RHD4CZ5A014MV3401 |  | -109.02d |

| ID | WBS | Task | Duration | Start | Finish | Predecessors | Total float |
| --- | --- | --- | --- | --- | --- | --- | --- |
| RHD4CZ5A014MV4200 |  | Termination for Normally open Point - (RD-A-1 /4)-Z5-A014-MV | 2d | 2027-08-29 | 2027-08-31 | RHD4CZ5A014MV4100 | -109.02d |
|  | 4255 | **RHD4-02-002-Z5-A014-Low Voltage Network - LV** |  | 2027-02-23 | 2027-10-07 |  |  |
|  | 4256 | **RHD4-02-002-A014-(LV)-Low Voltage duct banks** |  | 2027-02-23 | 2027-03-20 |  |  |
| RHD4CZ5A014LV2100 |  | Excavation of Duct Banks for Low Voltage Network - (RD-A-1 /4)-Z5-A014-LV | 4d | 2027-02-23 | 2027-02-28 | RHD4CZ5A014IRR1100, RHD4CZ5A014MV2100 | -168.02d |
| RHD4CZ5A014LV2200 |  | Installation of Duct Banks for Low Voltage Network - (RD-A-1 /4)-Z5-A014-LV | 6d | 2027-02-28 | 2027-03-07 | RHD4CZ5A014LV2100 | -168.02d |
| RHD4CZ5A014LV2300 |  | Pouring of Duct Banks for Low Voltage Network - (RD-A-1 /4)-Z5-A014-LV | 4d | 2027-03-07 | 2027-03-15 | RHD4CZ5A014LV2200 | -168.02d |
| RHD4CZ5A014LV2400 |  | Backfilling of Duct Banks for Low Voltage Network - (RD-A-1 /4)-Z5-A014-LV | 4d | 2027-03-15 | 2027-03-20 | RHD4CZ5A014LV2300 | -168.02d |
|  | 4257 | **RHD4-02-002-A014-(LV)-Low Voltage Drawpit** |  | 2027-09-07 | 2027-09-12 |  |  |
| RHD4CZ5A014LV5100 |  | Excavation of Drawpit size 900x900x1000mm for Low Voltage Network - (RD-A-1 /4)-Z5-A014-LV | 2d | 2027-09-07 | 2027-09-09 | RHD4CZ5A014MV1200, RHD4CZ5A014LV2300 | -109.02d |
| RHD4CZ5A014LV5200 |  | Installation of Drawpit size 900x900x1000mm for Low Voltage Network - (RD-A-1 /4)-Z5-A014-LV | 2d | 2027-09-09 | 2027-09-12 | RHD4CZ5A014LV5100 | -109.02d |
|  | 4258 | **RHD4-02-002-A014-(LV)-Low Voltage cables** |  | 2027-09-12 | 2027-10-04 |  |  |
| RHD4CZ5A014LV3100 |  | Excavation for Low Voltage Cables for Low Voltage Network - (RD-A-1 /4)-Z5-A014-LV | 5d | 2027-09-12 | 2027-09-18 | RHD4CZ5A014LV5200, RHD4CZ5A014LV2400 | -109.02d |
| RHD4CZ5A014LV3200 |  | Cable Laying of Low Voltage Cables for Low Voltage Network - (RD-A-1 /4)-Z5-A014-LV | 5d | 2027-09-18 | 2027-09-25 | RHD4CZ5A014LV3100 | -109.02d |
| RHD4CZ5A014LV3300 |  | Warning tape and Backfill for Low Voltage Cables for Low Voltage Network - (RD-A-1 /4)-Z5-A014-LV | 5d | 2027-09-25 | 2027-09-30 | RHD4CZ5A014LV3200 | -109.02d |
| RHD4CZ5A014LV3400 |  | Testing of Low Voltage Cables for Low Voltage Network - (RD-A-1 /4)-Z5-A014-LV | 3d | 2027-09-30 | 2027-10-04 | RHD4CZ5A014ST2500, RHD4CZ5A014LV3300 | -108.02d |
|  | 4259 | **RHD4-02-002-A014-(LV)-Low Voltage Distribution Pillars** |  | 2027-09-30 | 2027-10-07 |  |  |
| RHD4CZ5A014LV4100 |  | Leveling for Distribution Pillars for Low Voltage Network - (RD-A-1 /4)-Z5-A014-LV | 2d | 2027-09-30 | 2027-10-03 | RHD4CZ5A014LV3300 | -109.02d |
| RHD4CZ5A014LV4200 |  | Lean Concrete for Distribution Pillars for Low Voltage Network - (RD-A-1 /4)-Z5-A014-LV | 2d | 2027-10-03 | 2027-10-05 | RHD4CZ5A014LV4100 | -109.02d |
| RHD4CZ5A014LV4300 |  | Installation of Distribution Pillars for Low Voltage Network - (RD-A-1 /4)-Z5-A014-LV | 2d | 2027-10-05 | 2027-10-07 | RHD4CZ5A014LV3400, RHD4CZ5A014LV4200 | -109.02d |
|  | 3694 | **RHD4-02-002-Z5-A014-Street Lighting Network - SL** |  | 2027-02-28 | 2027-11-10 |  |  |
|  | 3695 | **RHD4-02-002-A014-(SL)-Street Lighting duct banks** |  | 2027-02-28 | 2027-03-20 |  |  |
| RHD4CZ5A014SL2100 |  | Excavation of Duct Banks for Street Lighting Network - (RD-A-1 /4)-Z5-A014-SL | 2d | 2027-02-28 | 2027-03-02 | RHD4ENSDZ5APPSL170, RHD4CZ5A014IRR1100, RHD4CZ5A014LV2100, RHD4CZ5A014PT3200, RHD4CZ5A014IRR1500 | -168.02d |
| RHD4CZ5A014SL2200 |  | Installation of Duct Banks for Street Lighting Network - (RD-A-1 /4)-Z5-A014-SL | 4d | 2027-03-02 | 2027-03-07 | RHD4CZ5A014SL2100 | -168.02d |
| RHD4CZ5A014SL2300 |  | Pouring of Duct Banks for Street Lighting Network - (RD-A-1 /4)-Z5-A014-SL | 4d | 2027-03-07 | 2027-03-15 | RHD4CZ5A014SL2200 | -168.02d |
| RHD4CZ5A014SL2400 |  | Backfilling of Duct Banks for Street Lighting Network - (RD-A-1 /4)-Z5-A014-SL | 4d | 2027-03-15 | 2027-03-20 | RHD4CZ5A014SL2300 | -168.02d |
|  | 3696 | **RHD4-02-002-A014-(SL)-Street Lighting Drawpit** |  | 2027-10-07 | 2027-10-12 |  |  |
| RHD4CZ5A014SL5100 |  | Excavation of Drawpit size 600x600x900mm for Street Lighting Network - (RD-A-1 /4)-Z5-A014-SL | 2d | 2027-10-07 | 2027-10-10 | RHD4CZ5A014SL2300, RHD4ENSDZ5APPSL170, RHD4CZ5A014LV4300 | -109.02d |
| RHD4CZ5A014SL5200 |  | Installation of Drawpit size 600x600x900mm for Street Lighting Network - (RD-A-1 /4)-Z5-A014-SL | 2d | 2027-10-10 | 2027-10-12 | RHD4CZ5A014SL5100, RHD4PRSHLDOSSL1400, RHD4PRSHLSTAGSL1400 | -109.02d |
|  | 3698 | **RHD4-02-002-A014-(SL)-Street Lighting Poles** |  | 2027-10-12 | 2027-11-04 |  |  |
| RHD4CZ5A014SL1100 |  | Excavation for RC Base for Lighting Poles for Street Lighting Network - (RD-A-1 /4)-Z5-A014-SL | 3d | 2027-10-12 | 2027-10-16 | RHD4CZ5A014SL2400, RHD4ENSDZ5APPSL170, RHD4CZ5A014SL5200 | -109.02d |
| RHD4CZ5A014SL1200 |  | Installation for RC Base for Lighting Poles for Street Lighting Network - (RD-A-1 /4)-Z5-A014-SL | 3d | 2027-10-16 | 2027-10-19 | RHD4CZ5A014SL1100 | -109.02d |
| RHD4CZ5A014SL1300 |  | Backfill for RC Base for Lighting Poles for Street Lighting Network - (RD-A-1 /4)-Z5-A014-SL | 3d | 2027-10-19 | 2027-10-23 | RHD4CZ5A014SL1200 | -109.02d |
| RHD4CZ5A014SL1400 |  | Installation for Lighting Poles for Street Lighting Network - (RD-A-1 /4)-Z5-A014-SL | 4d | 2027-10-23 | 2027-10-27 | RHD4CZ5A014SL1300, RHD4PRSHLDOSSL1200, RHD4ENMSSL2000, RHD4ENMSSL2010, RHD4PRSHLSTAGSL1200 | -107.02d |
| RHD4CZ5A014SL1500 |  | Luminaire Installation for Lighting Poles for Street Lighting Network - (RD-A-1 /4)-Z5-A014-SL | 5d | 2027-10-30 | 2027-11-04 | RHD4CZ5A014SL1400, RHD4CZ5A014SL6100, RHD4PRSHLDOSSL1300, RHD4PRSHLSTAGSL1300 | -107.02d |
|  | 3697 | **RHD4-02-002-A014-(SL)-Street Lighting cables** |  | 2027-10-23 | 2027-11-10 |  |  |
| RHD4CZ5A014SL3100 |  | Excavation for Street Lighting Cables for Street Lighting Network - (RD-A-1 /4)-Z5-A014-SL | 5d | 2027-10-23 | 2027-10-28 | RHD4CZ5A014SL1300, RHD4ENSDZ5APPSL170 | -109.02d |
| RHD4CZ5A014SL3200 |  | Cable Laying of Street Lighting Cables for Street Lighting Network - (RD-A-1 /4)-Z5-A014-SL | 4d | 2027-10-28 | 2027-11-02 | RHD4CZ5A014SL3100, RHD4PRSHLDOSSL1100, RHD4ENMSSL2000, RHD4ENMSSL2010, RHD4PRSHLSTAGSL1100 | -109.02d |
| RHD4CZ5A014SL3300 |  | Warning tape and Backfill for Street Lighting Cables for Street Lighting Network - (RD-A-1 /4)-Z5-A014-SL | 4d | 2027-11-02 | 2027-11-07 | RHD4CZ5A014SL3200, RHD4CZ5A014SL6100 | -109.02d |
| RHD4CZ5A014SL3400 |  | Testing of Street Lighting Cables for Street Lighting Network - (RD-A-1 /4)-Z5-A014-SL | 3d | 2027-11-07 | 2027-11-10 | RHD4CZ5A014SL3300, RHD4CZ5A014SL1500 | -109.02d |
|  | 3700 | **RHD4-02-002-A014-(SL)-Street Lighting Earthing System** |  | 2027-10-27 | 2027-10-30 |  |  |
| RHD4CZ5A014SL6100 |  | Installation of Earthing for Lighting Poles and Fedder Pillers for Street Lighting Network - (RD-A-1 /4)-Z5-A014-SL | 2d | 2027-10-27 | 2027-10-30 | RHD4CZ5A014SL1400, RHD4ENMSER2000, RHD4ENMSER2010 | -107.02d |
|  | 3706 | **RHD4-02-002-Z5-A014-Telecommunications Network - TC** |  | 2027-11-10 | 2027-12-08 |  |  |
|  | 3707 | **RHD4-02-002-A014-(TC)-Telecommunications Ducts** |  | 2027-11-10 | 2027-12-04 |  |  |
| RHD4CZ5A014TC2100 |  | Excavation of HDPE Ducts for Telecom Network - (RD-A-1 /4)-Z5-A014-TC | 6d | 2027-11-10 | 2027-11-17 | RHD4ENSDZ5APPTC190, RHD4CZ5A014SL3400 | -109.02d |
| RHD4CZ5A014TC2200 |  | Installation of HDPE Ducts for Telecom Network - (RD-A-1 /4)-Z5-A014-TC | 8d | 2027-11-17 | 2027-11-27 | RHD4CZ5A014TC2100, RHD4PRSHLDOSTC1000, RHD4PRSHLSTAGTC1000 | -109.02d |
| RHD4CZ5A014TC2400 |  | Backfilling of HDPE Ducts for Telecom Network - (RD-A-1 /4)-Z5-A014-TC | 6d | 2027-11-27 | 2027-12-04 | RHD4CZ5A014TC2200 | -109.02d |
|  | 3708 | **RHD4-02-002-A014-(TC)-Telecommunications Manholes** |  | 2027-12-04 | 2027-12-08 |  |  |
| RHD4CZ5A014TC5100 |  | Excavation for Manholes for Telecom Network - (RD-A-1 /4)-Z5-A014-TC | 2d | 2027-12-04 | 2027-12-06 | RHD4ENSDZ5APPTC190, RHD4CZ5A014TC2400 | -109.02d |
| RHD4CZ5A014TC5200 |  | Installation of Manholes for Telecom Network - (RD-A-1 /4)-Z5-A014-TC | 2d | 2027-12-06 | 2027-12-08 | RHD4CZ5A014TC5100, RHD4PRSHLDOSTC1200, RHD4PRSHLSTAGTC1200 | -109.02d |
|  | 3709 | **RHD4-02-002-A014-(TC)-Telecomminications Road Crossings** |  |  |  |  |  |
|  | 3710 | **RHD4-02-002-Z5-A014-Information and Communication Technologies - ICT** |  | 2027-12-08 | 2028-02-08 |  |  |
|  | 3711 | **RHD4-02-002-A014-(ICT)-Information and Communication Technologies Ducts** |  | 2027-12-08 | 2028-01-30 |  |  |
| RHD4CZ5A014ICT2100 |  | Excavation of HDPE Ducts for ICT Network - (RD-A-1 /4)-Z5-A014-ICT | 13d | 2027-12-08 | 2027-12-23 | RHD4ENSDZ5APPICT200, RHD4CZ5A014TC5200 | -109.02d |
| RHD4CZ5A014ICT2200 |  | Installation of HDPE Ducts for ICT Network - (RD-A-1 /4)-Z5-A014-ICT | 19d | 2027-12-23 | 2028-01-15 | RHD4CZ5A014ICT2100, RHD4PRSHLDOSICT1000, RHD4PRSHLSTAGICT1000 | -109.02d |
| RHD4CZ5A014ICT2400 |  | Backfilling of HDPE Ducts for ICT Network - (RD-A-1 /4)-Z5-A014-ICT | 13d | 2028-01-15 | 2028-01-30 | RHD4CZ5A014ICT2200 | -109.02d |
|  | 3712 | **RHD4-02-002-A014-(ICT)-Information and Communication Technologies Manholes** |  | 2028-01-30 | 2028-02-08 |  |  |
| RHD4CZ5A014ICT5100 |  | Excavation for Manholes for ICT Network - (RD-A-1 /4)-Z5-A014-ICT | 4d | 2028-01-30 | 2028-02-03 | RHD4ENSDZ5APPICT200, RHD4CZ5A014ICT2400 | -109.02d |
| RHD4CZ5A014ICT5200 |  | Installation of Manholes for ICT Network - (RD-A-1 /4)-Z5-A014-ICT | 4d | 2028-02-03 | 2028-02-08 | RHD4CZ5A014ICT5100, RHD4PRSHLDOSICT1200, RHD4PRSHLSTAGICT1200 | -109.02d |
|  | 3713 | **RHD4-02-002-A014-(ICT)-Information and Communication Technologies Road Crossings** |  |  |  |  |  |
|  | 3701 | **RHD4-02-002-Z5-A014-Landscape Network - LS** |  |  |  |  |  |
|  | 3702 | **RHD4-02-002-A014-(LS)-Landscape Lighting cables** |  |  |  |  |  |
|  | 3703 | **RHD4-02-002-A014-(LS)-Landscape Feeder Pillars** |  |  |  |  |  |
|  | 3704 | **RHD4-02-002-A014-(LS)-Landscape Bollard Poles** |  |  |  |  |  |
|  | 3705 | **RHD4-02-002-A014-(LS)-Landscape Feeder Pillars Earthing** |  |  |  |  |  |
|  | 3714 | **RHD4-02-002-Z5-A014-Security Network - CCTV** |  | 2028-02-08 | 2028-02-20 |  |  |
|  | 2959 | **RHD4-02-002-A014-(CCTV)-CCTV Poles** |  | 2028-02-08 | 2028-02-20 |  |  |
| RHD4CZ5A014CCTV1100 |  | Excavation for RC Base for CCTV Poles for Security Network - (RD-A-1 /4)-Z5-A014-CCTV | 2d | 2028-02-08 | 2028-02-10 | RHD4CZ5A014ICT5200 | -99.06d |
| RHD4CZ5A014CCTV1200 |  | Installation for RC Base for CCTV Poles for Security Network - (RD-A-1 /4)-Z5-A014-CCTV | 2d | 2028-02-10 | 2028-02-13 | RHD4CZ5A014CCTV1100 | -99.06d |
| RHD4CZ5A014CCTV1300 |  | Backfill for RC Base for CCTV Poles for Security Network - (RD-A-1 /4)-Z5-A014-CCTV | 2.03d | 2028-02-13 | 2028-02-15 | RHD4CZ5A014CCTV1200 | -99.06d |
| RHD4CZ5A014CCTV1400 |  | Installation for CCTV Poles for Security Network - (RD-A-1 /4)-Z5-A014-CCTV | 2d | 2028-02-15 | 2028-02-17 | RHD4CZ5A014CCTV1300 | -99.06d |

| ID | WBS | Task | Duration | Start | Finish | Predecessors | Complete | Total float |
| --- | --- | --- | --- | --- | --- | --- | --- | --- |
| RHD4CZ5A014CCTV1500 |  | Protection post Installation for CCTV Poles for Security Network - (RD-A-1 /4)-Z5-A014-CCTV | 2d | 2028-02-17 | 2028-02-20 | RHD4CZ5A014CCTV1400 |  | -99.06d |
|  | 3715 | **RHD4-02-002-A014-(CCTV)-Civil Works** |  |  |  |  |  |  |
|  | 3353 | **RHD4-02-002-Z5-L07** |  | 2026-06-03 | 2028-07-08 |  |  |  |
|  | 3384 | **RHD4-02-002-Z5-L07-Crossings Sewage Network - SWCr** |  |  |  |  |  |  |
|  | 3394 | **RHD4-02-002-L07-(SWCr)-MH Works - 1200 mm diameter** |  |  |  |  |  |  |
|  | 3390 | **RHD4-02-002-L07-(SWCr)-UPVC Pipes - 200 mm diameter** |  |  |  |  |  |  |
|  | 3428 | **RHD4-02-002-Z5-L07-Crossings Potable Network - PTCr** |  |  |  |  |  |  |
|  | 3430 | **RHD4-02-002-L07-(PTCr)-HDPE Pipes - 160 mm diameter** |  |  |  |  |  |  |
|  | 3429 | **RHD4-02-002-L07-(PTCr)-HDPE Pipes - 110 mm diameter** |  |  |  |  |  |  |
|  | 3434 | **RHD4-02-002-L07-(PTCr)-Gate Valves (Direct Buried)** |  |  |  |  |  |  |
|  | 3475 | **RHD4-02-002-Z5-L07-Crossings Irrigation Network - IRRC** |  |  |  |  |  |  |
|  | 3476 | **RHD4-02-002-L07-(IRRC)-HDPE Pipes - 160 mm diameter** |  |  |  |  |  |  |
|  | 3484 | **RHD4-02-002-L07-(IRRC)-Gate Valves (Direct Buried)** |  |  |  |  |  |  |
|  | 3487 | **RHD4-02-002-L07-(IRRC)-Wash out Chamber** |  |  |  |  |  |  |
|  | 3488 | **RHD4-02-002-L07-(IRRC)-Wash out Valves** |  |  |  |  |  |  |
|  | 3532 | **RHD4-02-002-Z5-L07-Road Works - RD** |  | 2026-06-03 | 2028-07-08 |  |  |  |
|  | 3533 | **RHD4-02-002-L07-(RD)-Subgrade** |  | 2026-06-03 | 2026-08-03 |  |  |  |
| RHD4CZ5L07RD1100 |  | Supply, lay and compaction subgrade compacted thickness 300 mm for Roads - (RD-L-7)-Z5-L07-RD(Completed) | 5d | 2026-06-03 A | 2026-08-03 A | RHD4ENSDZ5APPRD220, RHD4ENSDZ5APPEW100 SS, RHD4CZ5L07ST3301, RHD4CZ5L07ST3302, RHD4CZ5L07ICT3400, RHD4CZ5L07ICT3400 FF | 100% |  |
|  | 3534 | **RHD4-02-002-L07-(RD)-Aggregate Base Course** |  | 2026-10-13 | 2027-03-02 |  |  |  |
| RHD4CZ5L07RD2100 |  | Supply, lay and compaction Aggregate base course compacted thickness 300 mmfor Roads - (RD-L-7)-Z5-L07-RD | 10d | 2026-10-13 A | 2027-03-02 | RHD4PRSHLDOSRD1000, RHD4PRSHLSTAGRD1000, RHD4ENSDZ5APPRD220, RHD4ENSDZ5APPEW100 SS, RHD4CZ5L07RD1100 | 50% | -181d |
|  | 3535 | **RHD4-02-002-L07-(RD)-Bituminous base course Two Layers, including (MC1)&(RC2)** |  | 2027-03-03 | 2028-06-11 |  |  |  |
| RHD4CZ5L07RD3100 |  | Supply, lay and Asphaltic base course including Prime Coat (MC1) for 1st Layer - (RD-L-7)-Z5-L07-RD | 2d | 2027-03-03 | 2027-03-04 | RHD4CZ5L07RD2100, RHD4PRSHLDOSRD1100, RHD4ENMSASPH2000, RHD4ENMSASPH2010, RHD4PRSHLSTAGRD1100 |  | -181d |
| RHD4CZ5L07RD3200 |  | Supply, lay and Asphaltic base course including Tack Coat (RC2) for 2nd Layer - (RD-L-7)-Z5-L07-RD | 2d | 2028-06-10 | 2028-06-11 | RHD4PRSHLDOSRD1100, RHD4PRSHLSTAGRD1100, RHD4CZ5L07CCTV6100 |  | -147d |
|  | 3537 | **RHD4-02-002-L07-(RD)-Precast Concrete Curb** |  | 2028-06-12 | 2028-06-18 |  |  |  |
| RHD4CZ5L07RD5100 |  | Supply and installation Precast Concrete Kerb for Roads - (RD-L-7)-Z5-L07-RD | 6d | 2028-06-12 | 2028-06-18 | RHD4CZ5L07RD3200, RHD4PRSHLDOSRD1200, RHD4ENMSRD2000, RHD4ENMSRD2010, RHD4PRSHLSTAGRD1200, RHD4GNTCZ7FT1800 |  | -147d |
|  | 3540 | **RHD4-02-002-L07-(RD)-Traffic Signage** |  | 2028-06-19 | 2028-06-25 |  |  |  |
| RHD4CZ5L07RD8100 |  | Installation of Traffic Signage for Road Network - (RD-L-7)-Z5-L07-RD | 6d | 2028-06-19 | 2028-06-25 | RHD4CZ5L07RD5100, RHD4CZ7L03RD7100 |  | -147d |
|  | 3538 | **RHD4-02-002-L07-(RD)-Precast Interlocking Block Pavers** |  | 2028-06-26 | 2028-07-02 |  |  |  |
| RHD4CZ5L07RD6100 |  | Interlocking block pavers for sidewalk-footpath for Side walks and Parking areas - (RD-L-7)-Z5-L07-RD | 6d | 2028-06-26 | 2028-07-02 | RHD4PRSHLDOSRD1300, RHD4PRSHLDOSRD1400, RHD4ENMSRD2000, RHD4ENMSRD2010, RHD4PRSHLSTAGRD1300, RHD4CZ5L07RD8100 |  | -147d |
|  | 3536 | **RHD4-02-002-L07-(RD)-Bituminous concrete wearing course including tack coat (RC2)** |  | 2028-07-03 | 2028-07-04 |  |  |  |
| RHD4CZ5L07RD4100 |  | Supply, lay and compaction Asphaltic wearing course including tack Coat (RC2)for Road Network - (RD-L-7)-Z5-L07-RD | 2d | 2028-07-03 | 2028-07-04 | RHD4CZ5L07RD6100 |  | -147d |
|  | 3539 | **RHD4-02-002-L07-(RD)-Pavement Marking** |  | 2028-07-05 | 2028-07-08 |  |  |  |
| RHD4CZ5L07RD7100 |  | Pavement Markings for Road Network - (RD-L-7)-Z5-L07-RD | 3d | 2028-07-05 | 2028-07-08 | RHD4CZ5L07RD4100, RHD4PRSHLDOSRD1500, RHD4PRSHLSTAGRD1500 |  | -147d |
|  | 3357 | **RHD4-02-002-Z5-L07-Storm Network - ST** |  | 2026-08-04 | 2027-01-14 |  |  |  |
|  | 3375 | **RHD4-02-002-L07-(ST)-MH Works - 1500 mm diameter** |  | 2026-08-04 | 2027-01-05 |  |  |  |
| RHD4CZ5L07ST3101 |  | Excavation and PC Blinding works for MH 1500 mm - (RD-L-7)-Z5-L07-ST | 2d | 2026-08-04 A | 2026-08-06 A | RHD4ENSDZ5APPST110, RHD4ENMSST2000, RHD4PRSHLDOSST1003, RHD4ENSDZ5APPRD220, RHD4ENSDZ5APPEW100 SS | 100% |  |
| RHD4CZ5L07ST3201 |  | Installation of Base for MH 1500 mm - (RD-L-7)-Z5-L07-ST | 4d | 2026-09-19 A | 2026-09-22 A | RHD4CZ5L07ST3101, RHD4PRSHLSTAGST1604 | 100% |  |
| RHD4CZ5L07ST3301 |  | MH Ring and C.Slab works and Backfilling works for MH 1500 mm - (RD-L-7)-Z5-L07-ST | 2d | 2026-10-01 A | 2026-10-03 A | RHD4CZ5L07ST3201, RHD4PRSHLDOSST1604 | 100% |  |
| RHD4CZ5L07ST3401 |  | Steel Cover for MH 1500 mm - (RD-L-7)-Z5-L07-ST | 2d | 2027-01-02 | 2027-01-03 | RHD4CZ5L07ST3301, RHD4PRSHLDOSST1704, RHD4PRSHLSTAGST1704 |  | -129d |
| RHD4CZ5L07ST3501 |  | Finishing, Benching, Testing works for MH 1500 mm - (RD-L-7)-Z5-L07-ST | 2d | 2027-01-04 | 2027-01-05 | RHD4CZ5L07ST3401 |  | -128d |
|  | 3376 | **RHD4-02-002-L07-(ST)-MH Works - 2000 mm diameter** |  | 2026-08-04 | 2027-01-07 |  |  |  |
| RHD4CZ5L07ST3102 |  | Excavation and PC Blinding works for MH 2000 mm - (RD-L-7)-Z5-L07-ST | 5d | 2026-08-04 A | 2026-08-08 A | RHD4CZ5L07ST3101, RHD4ENSDZ5APPST110, RHD4ENMSST2000 | 100% |  |
| RHD4CZ5L07ST3202 |  | Installation of Base for MH 2000 mm - (RD-L-7)-Z5-L07-ST | 4d | 2026-08-09 A | 2026-08-21 A | RHD4CZ5L07ST3102, RHD4PRSHLSTAGST1604 | 100% |  |
| RHD4CZ5L07ST3302 |  | MH Ring and C.Slab works and Backfilling works for MH 2000 mm - (RD-L-7)-Z5-L07-ST | 4d | 2026-10-01 A | 2026-10-05 A | RHD4CZ5L07ST3202, RHD4PRSHLDOSST1604 | 100% |  |
| RHD4CZ5L07ST3402 |  | Steel Cover for MH 2000 mm - (RD-L-7)-Z5-L07-ST | 3d | 2027-01-02 | 2027-01-04 | RHD4CZ5L07ST3302, RHD4CZ5L07ST3401 SS, RHD4PRSHLDOSST1704, RHD4PRSHLSTAGST1704 |  | -129d |
| RHD4CZ5L07ST3502 |  | Finishing, Benching, Testing works for MH 2000 mm - (RD-L-7)-Z5-L07-ST | 3d | 2027-01-05 | 2027-01-07 | RHD4CZ5L07ST3402, RHD4CZ5L07ST3501 SS |  | -129d |
|  | 3374 | **RHD4-02-002-L07-(ST)-MH Works - 1200 mm diameter** |  | 2026-08-04 | 2027-01-05 |  |  |  |
| RHD4CZ5L07ST3100 |  | Excavation and PC Blinding works for MH 1200 mm - (RD-L-7)-Z5-L07-ST | 2d | 2026-08-04 A | 2026-08-10 A | RHD4CZ5L07ST3102, RHD4ENSDZ5APPST110, RHD4ENMSST2000, RHD4ENMSST2010 | 100% |  |
| RHD4CZ5L07ST3200 |  | Installation of Base for MH 1200 mm - (RD-L-7)-Z5-L07-ST | 2d | 2026-09-19 A | 2026-09-20 A | RHD4CZ5L07ST3100, RHD4PRSHLSTAGST1604 | 100% |  |
| RHD4CZ5L07ST3300 |  | MH Ring and C.Slab works and Backfilling works for MH 1200 mm - (RD-L-7)-Z5-L07-ST | 2d | 2026-10-01 A | 2026-10-03 A | RHD4CZ5L07ST3200, RHD4PRSHLDOSST1604 | 100% |  |
| RHD4CZ5L07ST3400 |  | Steel Cover for MH 1200 mm - (RD-L-7)-Z5-L07-ST | 2d | 2027-01-02 | 2027-01-03 | RHD4CZ5L07ST3300, RHD4PRSHLDOSST1704, RHD4PRSHLSTAGST1704 |  | -174d |
| RHD4CZ5L07ST3500 |  | Finishing, Benching, Testing works for MH 1200 mm - (RD-L-7)-Z5-L07-ST | 2d | 2027-01-04 | 2027-01-05 | RHD4CZ5L07ST3400 |  | -174d |
|  | 3366 | **RHD4-02-002-L07-(ST)-GRP Pipes - 1200 mm diameter** |  | 2026-08-04 | 2027-01-03 |  |  |  |
| RHD4CZ5L07ST1108 |  | Excavation works for GRP Pipe Line 1200 mm - (RD-L-7)-Z5-L07-ST | 4d | 2026-08-04 A | 2026-08-05 A | RHD4CZ5L07ST3202, RHD4CZ5L07ST3201, RHD4CZ5L07ST3200, RHD4ENSDZ5APPST110, RHD4ENSDZ7APPEW100, RHD4ENSDZ7APPRD220, RHD4CZ7L03RW3000 | 100% |  |
| RHD4CZ5L07ST1208 |  | Bedding works for GRP Pipe Line 1200 mm - (RD-L-7)-Z5-L07-ST | 2d | 2026-08-06 A | 2026-08-08 A | RHD4CZ5L07ST1108 | 100% |  |
| RHD4CZ5L07ST1308 |  | Installing for GRP Pipe Line 1200 mm - (RD-L-7)-Z5-L07-ST | 2d | 2026-08-09 A | 2026-08-10 A | RHD4CZ5L07ST1208, RHD4CZ5L07ST3302, RHD4CZ5L07ST3301, RHD4CZ5L07ST3300, RHD4PRSHLSTAGST1004, RHD4PRSHLDOSST1604, RHD4PRSHLPOST1000, RHD4PRSHLDOSST1004 | 100% |  |
| RHD4CZ5L07ST1508 |  | Backfilling and warning tape works for GRP Pipe Line 1200 mm - (RD-L-7)-Z5-L07-ST | 2d | 2026-09-24 A | 2026-09-26 A | RHD4CZ5L07ST1408 | 100% |  |
| RHD4CZ5L07ST1408 |  | Primary Test for GRP Pipe Line 1200 mm - (RD-L-7)-Z5-L07-ST | 2d | 2027-01-02 | 2027-01-03 | RHD4CZ5L07ST1308 |  | -149d |
|  | 3365 | **RHD4-02-002-L07-(ST)-GRP Pipes - 1100 mm diameter** |  | 2026-08-04 | 2027-01-03 |  |  |  |
| RHD4CZ5L07ST1107 |  | Excavation works for GRP Pipe Line 1100 mm - (RD-L-7)-Z5-L07-ST | 4d | 2026-08-04 A | 2026-08-05 A | RHD4CZ5L07ST1108, RHD4ENSDZ5APPST110 | 100% |  |
| RHD4CZ5L07ST1207 |  | Bedding works for GRP Pipe Line 1100 mm - (RD-L-7)-Z5-L07-ST | 2d | 2026-08-06 A | 2026-08-08 A | RHD4CZ5L07ST1107 | 100% |  |
| RHD4CZ5L07ST1307 |  | Installing for GRP Pipe Line 1100 mm - (RD-L-7)-Z5-L07-ST | 2d | 2026-08-09 A | 2026-08-10 A | RHD4CZ5L07ST1207, RHD4CZ5L07ST1308, RHD4PRSHLSTAGST1004, RHD4PRSHLDOSST1604, RHD4PRSHLPOST1000, RHD4PRSHLDOSST1004 | 100% |  |
| RHD4CZ5L07ST1507 |  | Backfilling and warning tape works for GRP Pipe Line 1100 mm - (RD-L-7)-Z5-L07-ST | 2d | 2026-09-24 A | 2026-09-26 A | RHD4CZ5L07ST1407, RHD4CZ5L07ST1508 | 100% |  |
| RHD4CZ5L07ST1407 |  | Primary Test for GRP Pipe Line 1100 mm - (RD-L-7)-Z5-L07-ST | 2d | 2027-01-02 | 2027-01-03 | RHD4CZ5L07ST1307 |  | -149d |
|  | 3364 | **RHD4-02-002-L07-(ST)-GRP Pipes - 1000 mm diameter** |  | 2026-08-04 | 2027-01-03 |  |  |  |
| RHD4CZ5L07ST1106 |  | Excavation works for GRP Pipe Line 1000 mm - (RD-L-7)-Z5-L07-ST | 4d | 2026-08-04 A | 2026-08-05 A | RHD4CZ5L07ST1107, RHD4ENSDZ5APPST110 | 100% |  |
| RHD4CZ5L07ST1206 |  | Bedding works for GRP Pipe Line 1000 mm - (RD-L-7)-Z5-L07-ST | 2d | 2026-09-15 A | 2026-09-16 A | RHD4CZ5L07ST1106 | 100% |  |
| RHD4CZ5L07ST1306 |  | Installing for GRP Pipe Line 1000 mm - (RD-L-7)-Z5-L07-ST | 2d | 2026-09-17 A | 2026-09-19 A | RHD4CZ5L07ST1206, RHD4CZ5L07ST1307, RHD4PRSHLSTAGST1004, RHD4PRSHLDOSST1604, RHD4PRSHLPOST1000, RHD4PRSHLDOSST1004 | 100% |  |
| RHD4CZ5L07ST1506 |  | Backfilling and warning tape works for GRP Pipe Line 1000 mm - (RD-L-7)-Z5-L07-ST | 2d | 2026-10-17 A | 2026-10-18 A | RHD4CZ5L07ST1406, RHD4CZ5L07ST1507 | 100% |  |
| RHD4CZ5L07ST1406 |  | Primary Test for GRP Pipe Line 1000 mm - (RD-L-7)-Z5-L07-ST | 2d | 2027-01-02 | 2027-01-03 | RHD4CZ5L07ST1306 |  | -149d |

| ID | WBS | Task | Duration | Start | Finish | Predecessors | Complete | Total float |
| --- | --- | --- | --- | --- | --- | --- | --- | --- |
|  | 3361 | **RHD4-02-002-L07-(ST)-GRP Pipes - 700 mm diameter** |  | 2026-08-04 | 2027-01-03 |  |  |  |
| RHD4CZ5L07ST1103 |  | Excavation works for GRP Pipe Line 700 mm - (RD-L-7)-Z5-L07-ST | 2d | 2026-08-04 A | 2026-08-05 A | RHD4CZ5L07ST1106, RHD4ENSDZ5APPST110 | 100% |  |
| RHD4CZ5L07ST1203 |  | Bedding works for GRP Pipe Line 700 mm - (RD-L-7)-Z5-L07-ST | 2d | 2026-08-06 A | 2026-08-08 A | RHD4CZ5L07ST1103 | 100% |  |
| RHD4CZ5L07ST1303 |  | Installing for GRP Pipe Line 700 mm - (RD-L-7)-Z5-L07-ST | 2d | 2026-08-09 A | 2026-08-10 A | RHD4CZ5L07ST1203, RHD4CZ5L07ST1306, RHD4PRSHLSTAGST1004, RHD4PRSHLDOSST1604, RHD4PRSHLPOST1000, RHD4PRSHLDOSST1004 | 100% |  |
| RHD4CZ5L07ST1503 |  | Backfilling and warning tape works for GRP Pipe Line 700 mm - (RD-L-7)-Z5-L07-ST | 2d | 2026-10-17 A | 2026-10-18 A | RHD4CZ5L07ST1403, RHD4CZ5L07ST1506 | 100% |  |
| RHD4CZ5L07ST1403 |  | Primary Test for GRP Pipe Line 700 mm - (RD-L-7)-Z5-L07-ST | 2d | 2027-01-02 | 2027-01-03 | RHD4CZ5L07ST1303 |  | -149d |
|  | 3360 | **RHD4-02-002-L07-(ST)-GRP Pipes - 600 mm diameter** |  | 2026-08-04 | 2026-10-18 |  |  |  |
| RHD4CZ5L07ST1102 |  | Excavation works for GRP Pipe Line 600 mm - (RD-L-7)-Z5-L07-ST | 2d | 2026-08-04 A | 2026-08-05 A | RHD4CZ5L07ST1103, RHD4ENSDZ5APPST110 | 100% |  |
| RHD4CZ5L07ST1202 |  | Bedding works for GRP Pipe Line 600 mm - (RD-L-7)-Z5-L07-ST | 2d | 2026-08-06 A | 2026-08-08 A | RHD4CZ5L07ST1102 | 100% |  |
| RHD4CZ5L07ST1302 |  | Installing for GRP Pipe Line 600 mm - (RD-L-7)-Z5-L07-ST | 2d | 2026-08-09 A | 2026-08-10 A | RHD4CZ5L07ST1202, RHD4CZ5L07ST1303, RHD4PRSHLSTAGST1004, RHD4PRSHLDOSST1604, RHD4PRSHLPOST1000, RHD4PRSHLDOSST1004 | 100% |  |
| RHD4CZ5L07ST1502 |  | Backfilling and warning tape works for GRP Pipe Line 600 mm - (RD-L-7)-Z5-L07-ST | 2d | 2026-09-30 A | 2026-10-01 A | RHD4CZ5L07ST1402, RHD4CZ5L07ST1503 | 100% |  |
| RHD4CZ5L07ST1402 |  | Primary Test for GRP Pipe Line 600 mm - (RD-L-7)-Z5-L07-ST | 2d | 2026-10-17 A | 2026-10-18 A | RHD4CZ5L07ST1302 | 100% |  |
|  | 3359 | **RHD4-02-002-L07-(ST)-GRP Pipes - 500 mm diameter** |  | 2026-08-04 | 2027-01-03 |  |  |  |
| RHD4CZ5L07ST1101 |  | Excavation works for GRP Pipe Line 500 mm - (RD-L-7)-Z5-L07-ST | 2d | 2026-08-04 A | 2026-08-05 A | RHD4CZ5L07ST1102, RHD4ENSDZ5APPST110 | 100% |  |
| RHD4CZ5L07ST1201 |  | Bedding works for GRP Pipe Line 500 mm - (RD-L-7)-Z5-L07-ST | 2d | 2026-08-06 A | 2026-08-08 A | RHD4CZ5L07ST1101 | 100% |  |
| RHD4CZ5L07ST1301 |  | Installing for GRP Pipe Line 500 mm - (RD-L-7)-Z5-L07-ST | 2d | 2026-08-09 A | 2026-08-22 A | RHD4CZ5L07ST1201, RHD4CZ5L07ST1302, RHD4PRSHLSTAGST1004, RHD4PRSHLDOSST1604, RHD4PRSHLPOST1000, RHD4PRSHLDOSST1004 | 100% |  |
| RHD4CZ5L07ST1501 |  | Backfilling and warning tape works for GRP Pipe Line 500 mm - (RD-L-7)-Z5-L07-ST | 2d | 2026-10-17 A | 2026-10-18 A | RHD4CZ5L07ST1401, RHD4CZ5L07ST1502 | 100% |  |
| RHD4CZ5L07ST1401 |  | Primary Test for GRP Pipe Line 500 mm - (RD-L-7)-Z5-L07-ST | 2d | 2027-01-02 | 2027-01-03 | RHD4CZ5L07ST1301 |  | -149d |
|  | 3373 | **RHD4-02-002-L07-(ST)-UPVC Pipes - 400 mm diameter** |  | 2027-01-04 | 2027-01-14 |  |  |  |
| RHD4CZ5L07ST2101 |  | Excavation works for UPVC Pipe Line 400 mm - (RD-L-7)-Z5-L07-ST | 2d | 2027-01-04 | 2027-01-05 | RHD4CZ5L07ST3300, RHD4CZ5L07ST3301, RHD4CZ5L07ST7300, RHD4CZ5L07ST8300, RHD4ENSDZ5APPST110 |  | -159d |
| RHD4CZ5L07ST2201 |  | Bedding works for UPVC Pipe Line 400 mm - (RD-L-7)-Z5-L07-ST | 2d | 2027-01-06 | 2027-01-07 | RHD4CZ5L07ST2101 |  | -159d |
| RHD4CZ5L07ST2301 |  | Installing for UPVC Pipe Line 400 mm - (RD-L-7)-Z5-L07-ST | 2d | 2027-01-09 | 2027-01-10 | RHD4CZ5L07ST2201, RHD4PRSHLDOSST1104, RHD4PRSHLSTAGST1104 |  | -159d |
| RHD4CZ5L07ST2401 |  | Primary Test for UPVC Pipe Line 400 mm - (RD-L-7)-Z5-L07-ST | 2d | 2027-01-11 | 2027-01-12 | RHD4CZ5L07ST2301 |  | -159d |
| RHD4CZ5L07ST2501 |  | Backfilling and warning tape works for UPVC Pipe Line 400 mm - (RD-L-7)-Z5-L07-ST | 2d | 2027-01-13 | 2027-01-14 | RHD4CZ5L07ST2401, RHD4CZ5L07ST6100 |  | -159d |
|  | 3372 | **RHD4-02-002-L07-(ST)-UPVC Pipes - 300 mm diameter** |  | 2026-08-04 | 2027-01-12 |  |  |  |
| RHD4CZ5L07ST2100 |  | Excavation works for UPVC Pipe Line 300 mm - (RD-L-7)-Z5-L07-ST | 2d | 2026-08-04 A | 2026-09-19 A | RHD4CZ5L07ST2101, RHD4CZ5L07ST3300, RHD4CZ5L07ST3301, RHD4ENSDZ5APPST110 | 100% |  |
| RHD4CZ5L07ST2200 |  | Bedding works for UPVC Pipe Line 300 mm - (RD-L-7)-Z5-L07-ST | 2d | 2026-09-19 A | 2026-09-20 A | RHD4CZ5L07ST2100 | 100% |  |
| RHD4CZ5L07ST2300 |  | Installing for UPVC Pipe Line 300 mm - (RD-L-7)-Z5-L07-ST | 2d | 2026-09-21 A | 2026-09-22 A | RHD4CZ5L07ST2200, RHD4CZ5L07ST2301, RHD4PRSHLDOSST1104, RHD4PRSHLSTAGST1104 | 100% |  |
| RHD4CZ5L07ST2500 |  | Backfilling and warning tape works for UPVC Pipe Line 300 mm - (RD-L-7)-Z5-L07-ST | 2d | 2026-10-01 A | 2026-10-03 A | RHD4CZ5L07ST2400, RHD4CZ5L07ST2501, RHD4CZ5L07ST6100, RHD4CZ5L07ST1501 | 100% |  |
| RHD4CZ5L07ST2400 |  | Primary Test for UPVC Pipe Line 300 mm - (RD-L-7)-Z5-L07-ST | 2d | 2027-01-11 | 2027-01-12 | RHD4CZ5L07ST2300 |  | -157d |
|  | 3380 | **RHD4-02-002-L07-(ST)-Concrete Encasement** |  | 2027-01-11 | 2027-01-12 |  |  |  |
| RHD4CZ5L07ST6100 |  | Pipe Encasement for Storm Pipelines - (RD-L-7)-Z5-L07-ST | 2d | 2027-01-11 | 2027-01-12 | RHD4CZ5L07ST2301 SS, RHD4CZ5L07ST2300 SS, RHD4CZ5L07ST2300 FF, RHD4CZ5L07ST2301 FF, RHD4CZ5L07ST2201, RHD4CZ5L07ST2200 |  | -159d |
|  | 3381 | **RHD4-02-002-Z5-L07-Catch Basin - ST** |  | 2026-08-04 | 2027-01-10 |  |  |  |
|  | 3382 | **RHD4-02-002-L07-(ST)-Single Catch Basin Works** |  | 2026-08-04 | 2027-01-10 |  |  |  |
| RHD4CZ5L07ST7100 |  | Excavation works for Single Catch Basin - (RD-L-7)-Z5-L07-ST | 3d | 2026-08-04 A | 2026-08-06 A | RHD4CZ5L07ST3300, RHD4CZ5L07ST3301, RHD4ENSDZ5APPST110 | 100% |  |
| RHD4CZ5L07ST7200 |  | PC Blinding, Installation and Pipe connection for Single Catch Basin - (RD-L-7)-Z5-L07-ST | 3d | 2026-09-19 A | 2026-09-21 A | RHD4CZ5L07ST7100 | 100% |  |
| RHD4CZ5L07ST7300 |  | Rings & C.Slab & Final Backfill for Single Catch Basin - (RD-L-7)-Z5-L07-ST | 3d | 2026-10-24 A | 2026-10-26 A | RHD4CZ5L07ST7200, RHD4PRSHLDOSST1304, RHD4PRSHLSTAGST1304 | 100% |  |
| RHD4CZ5L07ST7400 |  | Steel Cover for Single Catch Basin - (RD-L-7)-Z5-L07-ST | 3d | 2027-01-02 | 2027-01-04 | RHD4CZ5L07ST7300, RHD4PRSHLDOSST1704 |  | -160d |
| RHD4CZ5L07ST7500 |  | Finishing and Insulation works for Single Catch Basin - (RD-L-7)-Z5-L07-ST | 5d | 2027-01-05 | 2027-01-10 | RHD4CZ5L07ST7400 |  | -160d |
|  | 3383 | **RHD4-02-002-L07-(ST)-Double Catch Basin Works** |  | 2026-08-04 | 2027-01-07 |  |  |  |
| RHD4CZ5L07ST8100 |  | Excavation works for Double Catch Basin - (RD-L-7)-Z5-L07-ST | 2d | 2026-08-04 A | 2026-08-06 A | RHD4CZ5L07ST7100, RHD4CZ5L07ST3300, RHD4CZ5L07ST3301, RHD4ENSDZ5APPST110 | 100% |  |
| RHD4CZ5L07ST8200 |  | PC Blinding, Installation and Pipe connection for Double Catch Basin - (RD-L-7)-Z5-L07-ST | 2d | 2026-09-19 A | 2026-09-20 A | RHD4CZ5L07ST8100, RHD4CZ5L07ST7200 | 100% |  |
| RHD4CZ5L07ST8300 |  | Rings & C.Slab & Final Backfillfor Double Catch Basin - (RD-L-7)-Z5-L07-ST | 2d | 2027-01-02 | 2027-01-03 | RHD4CZ5L07ST8200, RHD4CZ5L07ST7300, RHD4PRSHLDOSST1304, RHD4PRSHLSTAGST1304 |  | -161d |
| RHD4CZ5L07ST8400 |  | Steel Cover for Double Catch Basin - (RD-L-7)-Z5-L07-ST | 2d | 2027-01-04 | 2027-01-05 | RHD4CZ5L07ST8300, RHD4CZ5L07ST7400 SS, RHD4PRSHLDOSST1704 |  | -161d |
| RHD4CZ5L07ST8500 |  | Finishing and Insulation works for Double Catch Basin - (RD-L-7)-Z5-L07-ST | 2d | 2027-01-06 | 2027-01-07 | RHD4CZ5L07ST8400, RHD4CZ5L07ST7500 SS |  | -161d |
|  | 3406 | **RHD4-02-002-Z5-L07-Sewage Network - SW** |  | 2026-08-10 | 2027-06-07 |  |  |  |
|  | 3416 | **RHD4-02-002-L07-(SW)-MH Works - 1200 mm diameter** |  | 2026-08-10 | 2027-06-07 |  |  |  |
| RHD4CZ5L07SW3100 |  | Excavation and PC Blinding works for MH 1200 mm - (RD-L-7)-Z5-L07-SW | 9d | 2026-08-10 A | 2026-08-15 A | RHD4ENSDZ5APPSW120, RHD4CZ5L07ST1106 | 100% |  |
| RHD4CZ5L07SW3200 |  | Installation of Base for MH 1200 mm - (RD-L-7)-Z5-L07-SW | 10d | 2026-08-11 A | 2026-09-20 A | RHD4CZ5L07SW3100 | 100% |  |
| RHD4CZ5L07SW3300 |  | MH Ring and C.Slab works and Backfilling works for MH 1200 mm - (RD-L-7)-Z5-L07-SW | 5d | 2026-10-20 A | 2026-10-25 A | RHD4CZ5L07SW3200 | 100% |  |
| RHD4CZ5L07SW3400 |  | Steel Cover for MH 1200 mm - (RD-L-7)-Z5-L07-SW | 7d | 2027-05-19 | 2027-05-26 | RHD4CZ5L07SW3300, RHD4PRSHLDOSSW1404, RHD4PRSHLSTAGSW1404, RHD4CZ5L016SW3400 |  | -159d |
| RHD4CZ5L07SW3500 |  | Finishing, Benching, Testing works for MH 1200 mm - (RD-L-7)-Z5-L07-SW | 10d | 2027-05-27 | 2027-06-07 | RHD4CZ5L07SW3400 |  | -159d |
|  | 3412 | **RHD4-02-002-L07-(SW)-UPVC Pipes - 200 mm diameter** |  | 2026-08-11 | 2027-02-15 |  |  |  |
| RHD4CZ5L07SW2100 |  | Excavation works for UPVC Pipe Line 200 mm - (RD-L-7)-Z5-L07-SW | 4d | 2026-08-11 A | 2026-08-15 A | RHD4ENSDZ5APPSW120, RHD4CZ5L07SW3100 | 100% |  |
| RHD4CZ5L07SW2200 |  | Bedding works for UPVC Pipe Line 200 mm - (RD-L-7)-Z5-L07-SW | 4d | 2026-08-13 A | 2026-08-17 A | RHD4CZ5L07SW2100 | 100% |  |
| RHD4CZ5L07SW2500 |  | Backfilling and warning tape works for UPVC Pipe Line 200 mm - (RD-L-7)-Z5-L07-SW | 5d | 2026-08-13 A | 2026-08-22 A | RHD4CZ5L07SW2400 | 100% |  |
| RHD4CZ5L07SW2300 |  | Installing for UPVC Pipe Line 200 mm - (RD-L-7)-Z5-L07-SW | 6d | 2026-08-15 A | 2026-08-19 A | RHD4CZ5L07SW2200, RHD4CZ5L07SW3300 | 100% |  |
| RHD4CZ5L07SW2400 |  | Primary Test for UPVC Pipe Line 200 mm - (RD-L-7)-Z5-L07-SW | 3d | 2026-10-27 A | 2027-02-15 | RHD4CZ5L07SW2300, RHD4CZ7L015ST1505 | 80% | -156.02d |
|  | 3415 | **RHD4-02-002-L07-(SW)-Concrete Encasement** |  |  |  |  |  |  |
|  | 3443 | **RHD4-02-002-Z5-L07-Potable Network - PT** |  | 2026-08-04 | 2027-05-02 |  |  |  |
|  | 3447 | **RHD4-02-002-L07-(PT)-HDPE Pipes - 400 mm diameter** |  | 2027-02-15 | 2027-02-28 |  |  |  |
| RHD4CZ5L07PT1103 |  | Excavation works for HDPE Pipline 400 mm - (RD-L-7)-Z5-L07-PT | 2d | 2027-02-15 | 2027-02-17 | RHD4ENSDZ5APPPT130, RHD4ENMSPT2000, RHD4CZ5L07SW2500, RHD4ENMSEW2000, RHD4ENMSEW2010, RHD4ENSDZ5APPEW100 SS |  | -156.02d |
| RHD4CZ5L07PT1203 |  | Bedding works for HDPE Pipline 400 mm - (RD-L-7)-Z5-L07-PT | 2d | 2027-02-17 | 2027-02-20 | RHD4CZ5L07PT1103 |  | -156.02d |
| RHD4CZ5L07PT1303 |  | Installing for HDPE Pipline 400 mm - (RD-L-7)-Z5-L07-PT | 2d | 2027-02-20 | 2027-02-23 | RHD4CZ5L07PT1203, RHD4PRSHLDOSPT1000, RHD4PRSHLSTAGPT1000 |  | -156.02d |
| RHD4CZ5L07PT1403 |  | Primary Test for HDPE Pipline 400 mm - (RD-L-7)-Z5-L07-PT | 2d | 2027-02-23 | 2027-02-25 | RHD4CZ5L07PT1303 |  | -156.02d |
| RHD4CZ5L07PT1503 |  | Backfilling and warning tape works for HDPE Pipline 400 mm - (RD-L-7)-Z5-L07-PT | 2d | 2027-02-25 | 2027-02-28 | RHD4CZ5L07PT1403 |  | -156.02d |
|  | 2687 | **RHD4-02-002-L07-(PT)-HDPE Pipes - 110 mm diameter** |  | 2027-02-15 | 2027-02-28 |  |  |  |
| RHD4CZ5L07PT1100 |  | Excavation works for HDPE Pipline 110 mm - (RD-L-7)-Z5-L07-PT | 2d | 2027-02-15 | 2027-02-17 | RHD4CZ5L07SW2500 |  | -156.02d |
| RHD4CZ5L07PT1200 |  | Bedding works for HDPE Pipline 110 mm - (RD-L-7)-Z5-L07-PT | 2d | 2027-02-17 | 2027-02-20 | RHD4CZ5L07PT1100 |  | -124.02d |
| RHD4CZ5L07PT1300 |  | Installing for HDPE Pipline 110 mm - (RD-L-7)-Z5-L07-PT | 2d | 2027-02-20 | 2027-02-23 | RHD4CZ5L07PT1200 |  | -124.02d |

| ID | WBS | Task | Duration | Start | Finish | Predecessors | Complete | Total float |
| --- | --- | --- | --- | --- | --- | --- | --- | --- |
| RHD4CZ5L07PT1400 |  | Primary Test for HDPE Pipline 110 mm - (RD-L-7)-Z5-L07-PT | 2d | 2027-02-23 | 2027-02-25 | RHD4CZ5L07PT1300 |  | -124.02d |
| RHD4CZ5L07PT1500 |  | Backfilling and warning tape works for HDPE Pipline 110 mm - (RD-L-7)-Z5-L07-PT | 2d | 2027-02-25 | 2027-02-28 | RHD4CZ5L07PT1400 |  | -124.02d |
|  | 3445 | **RHD4-02-002-L07-(PT)-HDPE Pipes - 160 mm diameter** |  | 2026-08-04 | 2027-04-03 |  |  |  |
| RHD4CZ5L07PT1101 |  | Excavation works for HDPE Pipline 160 mm - (RD-L-7)-Z5-L07-PT | 8d | 2026-08-04 A | 2027-02-23 | RHD4ENSDZ5APPPT130, RHD4ENMSPT2000, RHD4CZ5L07PT1103 | 4% | -152.02d |
| RHD4CZ5L07PT1201 |  | Bedding works for HDPE Pipline 160 mm - (RD-L-7)-Z5-L07-PT | 4d | 2026-08-06 A | 2027-02-28 | RHD4CZ5L07PT1101 | 4% | -152.02d |
| RHD4CZ5L07PT1301 |  | Installing for HDPE Pipline 160 mm - (RD-L-7)-Z5-L07-PT | 7d | 2026-08-08 A | 2027-03-08 | RHD4CZ5L07PT1201, RHD4PRSHLDOSPT1000, RHD4PRSHLSTAGPT1000 | 5% | -152.02d |
| RHD4CZ5L07PT1401 |  | Primary Test for HDPE Pipline 160 mm - (RD-L-7)-Z5-L07-PT | 3d | 2027-03-23 | 2027-03-27 | RHD4CZ5L07PT1301, RHD4CZ5L07PT5100 |  | -152.02d |
| RHD4CZ5L07PT1501 |  | Backfilling and warning tape works for HDPE Pipline 160 mm - (RD-L-7)-Z5-L07-PT | 6d | 2027-03-27 | 2027-04-03 | RHD4CZ5L07PT1401 |  | -152.02d |
|  | 3449 | **RHD4-02-002-L07-(PT)-Gate Valves (Direct Buried)** |  | 2027-03-06 | 2027-04-05 |  |  |  |
| RHD4CZ5L07PT3100 |  | Installation for Direct Buried Gate Valves - (RD-L-7)-Z5-L07-PT | 2d | 2027-03-06 | 2027-03-08 | RHD4CZ5L07PT1303 FF, RHD4CZ5L07PT1301 FF, RHD4CZ5L07PT1303 SS, RHD4CZ5L07PT1301 SS, RHD4PRSHLDOSPT1200, RHD4PRSHLSTAGPT1200, RHD4CZ5L07RD2100 |  | -131.02d |
| RHD4CZ5L07PT3200 |  | Stem and Service box for Direct Buried Gate Valves - (RD-L-7)-Z5-L07-PT | 2d | 2027-04-03 | 2027-04-05 | RHD4CZ5L07PT3100, RHD4CZ5L07PT1503, RHD4CZ5L07PT1501, RHD4CZ5L07PT1500 |  | -150.02d |
|  | 3450 | **RHD4-02-002-L07-(PT)-Butterfly Valve Chamber** |  | 2027-02-17 | 2027-02-28 |  |  |  |
| RHD4CZ5L07PT2100 |  | Excavation and Bedding for Butterfly Valve Chamber for Potable Water Network - (RD-L-7)-Z5-L07-PT | 2d | 2027-02-17 | 2027-02-20 | RHD4ENSDZ5APPPT130, RHD4CZ5L07PT1100 |  | -156.02d |
| RHD4CZ5L07PT2200 |  | PC works for Butterfly Valve Chamber for Potable Water Network - (RD-L-7)-Z5-L07-PT | 2d | 2027-02-20 | 2027-02-23 | RHD4CZ5L07PT2100 |  | -156.02d |
| RHD4CZ5L07PT2300 |  | Installation for Butterfly Valve Chamber for Potable Water Network - (RD-L-7)-Z5-L07-PT | 2d | 2027-02-23 | 2027-02-25 | RHD4CZ5L07PT2200, RHD4PRSHLDOSPT1100 |  | -156.02d |
| RHD4CZ5L07PT2400 |  | Backfilling works for Butterfly Valve Chamber for Potable Water Network - (RD-L-7)-Z5-L07-PT | 2d | 2027-02-25 | 2027-02-28 | RHD4CZ5L07PT2300 |  | -156.02d |
|  | 3451 | **RHD4-02-002-L07-(PT)-Butterfly Valves** |  | 2027-02-25 | 2027-03-02 |  |  |  |
| RHD4CZ5L07PT3101 |  | Installation for Butterfly Valves for Potable Water Network - (RD-L-7)-Z5-L07-PT | 2d | 2027-02-25 | 2027-02-28 | RHD4CZ5L07PT2300, RHD4PRSHLDOSPT1200, RHD4PRSHLSTAGPT1200 |  | -124.02d |
| RHD4CZ5L07PT3201 |  | Stem and Service box for Butterfly Valves for Potable Water Network - (RD-L-7)-Z5-L07-PT | 2d | 2027-02-28 | 2027-03-02 | RHD4CZ5L07PT3101, RHD4CZ5L07PT2400 |  | -124.02d |
|  | 3452 | **RHD4-02-002-L07-(PT)-Wash out Valve Chambers** |  | 2027-04-03 | 2027-04-14 |  |  |  |
| RHD4CZ5L07PT2101 |  | Excavation and Bedding for Wash out Valve Chambers for Potable Water Network - (RD-L-7)-Z5-L07-PT | 2d | 2027-04-03 | 2027-04-05 | RHD4CZ5L07PT1503, RHD4CZ5L07PT1501, RHD4ENSDZ5APPPT130 |  | -152.02d |
| RHD4CZ5L07PT2201 |  | PC works for Wash out Valve Chambers for Potable Water Network - (RD-L-7)-Z5-L07-PT | 2d | 2027-04-05 | 2027-04-07 | RHD4CZ5L07PT2101 |  | -152.02d |
| RHD4CZ5L07PT2301 |  | Installation for Wash out Valve Chambers for Potable Water Network - (RD-L-7)-Z5-L07-PT | 2d | 2027-04-07 | 2027-04-10 | RHD4CZ5L07PT2201, RHD4CZ5L07PT3201, RHD4CZ5L07PT3200 |  | -152.02d |
| RHD4CZ5L07PT2401 |  | Backfilling works for Wash out Valve Chambers for Potable Water Network - (RD-L-7)-Z5-L07-PT | 4d | 2027-04-10 | 2027-04-14 | RHD4CZ5L07PT2301 |  | -152.02d |
|  | 3453 | **RHD4-02-002-L07-(PT)-Wash out Valves** |  | 2027-04-10 | 2027-04-19 |  |  |  |
| RHD4CZ5L07PT3102 |  | Installation for Wash out Valves for Potable Water Network - (RD-L-7)-Z5-L07-PT | 4d | 2027-04-10 | 2027-04-14 | RHD4CZ5L07PT2301, RHD4PRSHLDOSPT1200, RHD4PRSHLSTAGPT1200 |  | -152.02d |
| RHD4CZ5L07PT3202 |  | Stem and Service box for Wash out Valves for Potable Water Network - (RD-L-7)-Z5-L07-PT | 4d | 2027-04-14 | 2027-04-19 | RHD4CZ5L07PT3102, RHD4CZ5L07PT2401 |  | -152.02d |
|  | 3454 | **RHD4-02-002-L07-(PT)-Air Valve Chambers** |  | 2027-04-03 | 2027-04-17 |  |  |  |
| RHD4CZ5L07PT2102 |  | Excavation and Bedding for Air Valve Chambers for Potable Water Network - (RD-L-7)-Z5-L07-PT | 2d | 2027-04-03 | 2027-04-05 | RHD4CZ5L07PT1503, RHD4CZ5L07PT1501, RHD4ENSDZ5APPPT130 |  | -152.02d |
| RHD4CZ5L07PT2202 |  | PC works for Air Valve Chambers for Potable Water Network - (RD-L-7)-Z5-L07-PT | 2d | 2027-04-05 | 2027-04-07 | RHD4CZ5L07PT2102 |  | -152.02d |
| RHD4CZ5L07PT2302 |  | Installation for Air Valve Chambers for Potable Water Network - (RD-L-7)-Z5-L07-PT | 4d | 2027-04-07 | 2027-04-12 | RHD4CZ5L07PT2202, RHD4PRSHLDOSPT1100, RHD4PRSHLDOSPT1400, RHD4PRSHLSTAGPT1100, RHD4PRSHLSTAGPT1400 |  | -152.02d |
| RHD4CZ5L07PT2402 |  | Backfilling works for Air Valve Chambers for Potable Water Network - (RD-L-7)-Z5-L07-PT | 4d | 2027-04-12 | 2027-04-17 | RHD4CZ5L07PT2302 |  | -152.02d |
|  | 3455 | **RHD4-02-002-L07-(PT)-Air Valves** |  | 2027-03-08 | 2027-04-19 |  |  |  |
| RHD4CZ5L07PT3103 |  | Installation for Air Valves for Potable Water Network - (RD-L-7)-Z5-L07-PT | 2d | 2027-03-08 | 2027-03-14 | RHD4PRSHLDOSPT1200, RHD4PRSHLSTAGPT1200, RHD4CZ5L07PT1301, RHD4CZ5L07PT1300, RHD4CZ5L07PT1303 |  | -123.02d |
| RHD4CZ5L07PT3203 |  | Stem and Service box for Air Valves for Potable Water Network - (RD-L-7)-Z5-L07-PT | 2d | 2027-04-17 | 2027-04-19 | RHD4CZ5L07PT3103, RHD4CZ5L07PT2402 |  | -152.02d |
|  | 3456 | **RHD4-02-002-L07-(PT)-Fire Hydrant** |  | 2027-04-03 | 2027-05-02 |  |  |  |
| RHD4CZ5L07PT4100 |  | Excavation and Bedding and Pipe Installation for Fire Hydrant - (RD-L-7)-Z5-L07-PT | 7d | 2027-04-03 | 2027-04-11 | RHD4CZ5L07PT1503, RHD4CZ5L07PT1501, RHD4ENSDZ5APPPT130 |  | -151.02d |
| RHD4CZ5L07PT4200 |  | Valve Installation for Fire Hydrant - (RD-L-7)-Z5-L07-PT | 5d | 2027-04-11 | 2027-04-17 | RHD4CZ5L07PT4100 |  | -151.02d |
| RHD4CZ5L07PT4300 |  | Stem for Fire Hydrant - (RD-L-7)-Z5-L07-PT | 5d | 2027-04-17 | 2027-04-22 | RHD4CZ5L07PT4200 |  | -151.02d |
| RHD4CZ5L07PT4400 |  | Fire Installation for Fire Hydrant - (RD-L-7)-Z5-L07-PT | 5d | 2027-04-22 | 2027-04-28 | RHD4CZ5L07PT4300, RHD4PRSHLDOSPT1500, RHD4PRSHLSTAGPT1500 |  | -151.02d |
| RHD4CZ5L07PT4500 |  | Protection Barriers for Fire Hydrant - (RD-L-7)-Z5-L07-PT | 3d | 2027-04-28 | 2027-05-02 | RHD4CZ5L07PT4400, RHD4CZ5L07IRR3202 |  | -151.02d |
|  | 3457 | **RHD4-02-002-L07-(PT)-Concrete Encasement** |  | 2027-02-28 | 2027-03-23 |  |  |  |
| RHD4CZ5L07PT5100 |  | Pipe Encasement for Potable Pipelines - (RD-L-7)-Z5-L07-PT | 17d | 2027-02-28 | 2027-03-23 | RHD4CZ5L07PT1303 FF, RHD4CZ5L07PT1301 FF, RHD4CZ5L07PT1303 SS, RHD4CZ5L07PT1301 SS, RHD4CZ5L07PT1203, RHD4CZ5L07PT1201 |  | -152.02d |
|  | 3458 | **RHD4-02-002-Z5-L07-Irrigation Network - IRR** |  | 2026-08-04 | 2027-04-10 |  |  |  |
|  | 3459 | **RHD4-02-002-L07-(IRR)-HDPE Pipes - 160 mm diameter** |  | 2026-08-04 | 2027-03-29 |  |  |  |
| RHD4CZ5L07IRR1100 |  | Excavation works for HDPE Pipline 160 mm - (RD-L-7)-Z5-L07-IRR | 6d | 2026-08-04 A | 2027-03-07 | RHD4CZ5L07PT1101, RHD4ENSDZ5APPIRR140, RHD4ENMSRR2000, RHD4CZ5L07PT1503 | 6% | -156.02d |
| RHD4CZ5L07IRR1200 |  | Bedding works for HDPE Pipline 160 mm - (RD-L-7)-Z5-L07-IRR | 4d | 2026-08-06 A | 2027-03-15 | RHD4CZ5L07IRR1100 | 6% | -145.02d |
| RHD4CZ5L07IRR1300 |  | Installing for HDPE Pipline 160 mm - (RD-L-7)-Z5-L07-IRR | 6d | 2026-08-08 A | 2027-03-22 | RHD4CZ5L07IRR1200, RHD4PRSHLDOSIRR1000, RHD4PRSHLSTAGIRR1000 | 6% | -145.02d |
| RHD4CZ5L07IRR1400 |  | Primary Test for HDPE Pipline 160 mm - (RD-L-7)-Z5-L07-IRR | 2d | 2027-03-22 | 2027-03-24 | RHD4CZ5L07IRR1300 |  | -145.02d |
| RHD4CZ5L07IRR1500 |  | Backfilling and warning tape works for HDPE Pipline 160 mm - (RD-L-7)-Z5-L07-IRR | 4d | 2027-03-24 | 2027-03-29 | RHD4CZ5L07IRR1400 |  | -145.02d |
|  | 1770 | **RHD4-02-002-L07-(IRR)-Air Valves** |  | 2027-03-17 | 2027-03-22 |  |  |  |
| RHD4CZ5L07IRR3103 |  | Installation for Air Valves for Irrigation Network - (RD-L-7)-Z5-L07-IRR | 2d | 2027-03-17 | 2027-03-20 | RHD4CZ5L07IRR1100, RHD4CZ5L07IRR2302 |  | -156.02d |
| RHD4CZ5L07IRR3203 |  | Stem and Service box for Air Valves for Irrigation Network - (RD-L-7)-Z5-L07-IRR | 2d | 2027-03-20 | 2027-03-22 | RHD4CZ5L07IRR3103, RHD4CZ5L07IRR2402 |  | -156.02d |
|  | 1769 | **RHD4-02-002-L07-(IRR)-Air Valve Chamber** |  | 2027-03-07 | 2027-03-20 |  |  |  |
| RHD4CZ5L07IRR2102 |  | Excavation and Bedding for Valve Chamber for Irrigation Network - (RD-L-7)-Z5-L07-IRR | 2d | 2027-03-07 | 2027-03-13 | RHD4CZ5L07IRR1100 |  | -156.02d |
| RHD4CZ5L07IRR2202 |  | PC works for Valve Chamber for Irrigation Network - (RD-L-7)-Z5-L07-IRR | 2d | 2027-03-13 | 2027-03-15 | RHD4CZ5L07IRR2102 |  | -156.02d |
| RHD4CZ5L07IRR2302 |  | Installation for Valve Chamber for Irrigation Network - (RD-L-7)-Z5-L07-IRR | 2d | 2027-03-15 | 2027-03-17 | RHD4CZ5L07IRR2202 |  | -156.02d |
| RHD4CZ5L07IRR2402 |  | Backfilling works for Valve Chamber for Irrigation Network - (RD-L-7)-Z5-L07-IRR | 2d | 2027-03-17 | 2027-03-20 | RHD4CZ5L07IRR2302 |  | -156.02d |
|  | 3467 | **RHD4-02-002-L07-(IRR)-Gate Valves (Direct Buried)** |  | 2027-03-18 | 2027-04-01 |  |  |  |
| RHD4CZ5L07IRR3100 |  | Installation for Direct Buried Gate Valves - (RD-L-7)-Z5-L07-IRR | 3d | 2027-03-18 | 2027-03-22 | RHD4CZ5L07IRR1300 SS, RHD4CZ5L07IRR1300 FF, RHD4PRSHLDOSIRR1100, RHD4PRSHLSTAGIRR1100 |  | -139.02d |
| RHD4CZ5L07IRR3200 |  | Stem and Service box for Direct Buried Gate Valves - (RD-L-7)-Z5-L07-IRR | 3d | 2027-03-29 | 2027-04-01 | RHD4CZ5L07IRR3100, RHD4CZ5L07IRR1500, RHD4PRSHLDOSIRR1300, RHD4PRSHLSTAGIRR1300 |  | -145.02d |
|  | 3470 | **RHD4-02-002-L07-(IRR)-Wash out Chamber** |  | 2027-03-29 | 2027-04-07 |  |  |  |
| RHD4CZ5L07IRR2101 |  | Excavation and Bedding for Wash out Chamber for Irrigation Network - (RD-L-7)-Z5-L07-IRR | 2d | 2027-03-29 | 2027-03-31 | RHD4CZ5L07IRR1500, RHD4ENSDZ5APPIRR140 |  | -135.02d |
| RHD4CZ5L07IRR2201 |  | PC works for Wash out Chamber for Irrigation Network - (RD-L-7)-Z5-L07-IRR | 2d | 2027-03-31 | 2027-04-03 | RHD4CZ5L07IRR2101 |  | -135.02d |
| RHD4CZ5L07IRR2301 |  | Installation for Wash out Chamber for Irrigation Network - (RD-L-7)-Z5-L07-IRR | 2d | 2027-04-03 | 2027-04-05 | RHD4CZ5L07IRR2201, RHD4PRSHLDOSIRR1200, RHD4PRSHLDOSIRR1400, RHD4PRSHLSTAGIRR1200, RHD4PRSHLSTAGIRR1400 |  | -135.02d |
| RHD4CZ5L07IRR2401 |  | Backfilling works for Wash out Chamber for Irrigation Network - (RD-L-7)-Z5-L07-IRR | 2d | 2027-04-05 | 2027-04-07 | RHD4CZ5L07IRR2301 |  | -135.02d |
|  | 3471 | **RHD4-02-002-L07-(IRR)-Wash out Valves** |  | 2027-04-05 | 2027-04-10 |  |  |  |
| RHD4CZ5L07IRR3102 |  | Installation for Wash out Valve for Irrigation Network - (RD-L-7)-Z5-L07-IRR | 2d | 2027-04-05 | 2027-04-07 | RHD4CZ5L07IRR2301, RHD4PRSHLDOSIRR1100, RHD4PRSHLSTAGIRR1100 |  | -135.02d |
| RHD4CZ5L07IRR3202 |  | Stem and Service box for Wash out Valve for Irrigation Network - (RD-L-7)-Z5-L07-IRR | 2d | 2027-04-07 | 2027-04-10 | RHD4CZ5L07IRR3102, RHD4CZ5L07IRR2401, RHD4PRSHLDOSIRR1300, RHD4PRSHLSTAGIRR1300 |  | -135.02d |
|  | 3474 | **RHD4-02-002-L07-(IRR)-Concrete Encasement** |  |  |  |  |  |  |

| ID | WBS | Task | Duration | Start | Finish | Predecessors | Total float |
| --- | --- | --- | --- | --- | --- | --- | --- |
|  | 3492 | **RHD4-02-002-Z5-L07-Medium Voltage Network - MV** |  | 2027-07-24 | 2027-09-19 |  |  |
|  | 3493 | **RHD4-02-002-L07-(MV)-Medium Voltage cable trench** |  | 2027-07-24 | 2027-08-19 |  |  |
| RHD4CZ5L07MV1100 |  | Excavation for Medium Voltage Trench - (RD-L-7)-Z5-L07-MV | 11d | 2027-07-24 | 2027-08-05 | RHD4ENSDZ5APPMV150, RHD4CZ5L07RD3100, RHD4CZ3C083ST1501, RHD4CZ3C083ST1502, RHD4CZ5A014MV1100 | -153.02d |
| RHD4CZ5L07MV1200 |  | Trench Backfilling for Medium Voltage Network - (RD-L-7)-Z5-L07-MV | 12d | 2027-08-05 | 2027-08-19 | RHD4CZ5L07MV1100 | -113.02d |
|  | 1982 | **RHD4-02-002-L07-(MV)-Medium Voltage cables 3Cx 50 mm²** |  | 2027-08-29 | 2027-08-31 |  |  |
| RHD4CZ5L07MV3401 |  | Termination of Medium Voltage Cables 3Cx 50 mm² - (RD-L-7)-Z5-L07-MV | 2d | 2027-08-29 | 2027-08-31 | RHD4CZ5L07MV3300 | -111.02d |
|  | 3494 | **RHD4-02-002-L07-(MV)-Medium Voltage duct banks** |  | 2027-08-05 | 2027-09-19 |  |  |
| RHD4CZ5L07MV2100 |  | Excavation of Duct Banks for Medium Voltage Network - (RD-L-7)-Z5-L07-MV | 9d | 2027-08-05 | 2027-08-16 | RHD4ENSDZ5APPMV150, RHD4CZ5L07MV1100 | -115.02d |
| RHD4CZ5L07MV2200 |  | Installation of Duct Banks for Medium Voltage Network - (RD-L-7)-Z5-L07-MV | 13d | 2027-08-16 | 2027-08-31 | RHD4CZ5L07MV2100, RHD4PRSHLDOSMV1000, RHD4PRSHLSTAGMV1000 | -115.02d |
| RHD4CZ5L07MV2300 |  | Pouring of Duct Banks for Medium Voltage Network - (RD-L-7)-Z5-L07-MV | 9d | 2027-08-31 | 2027-09-11 | RHD4CZ5L07MV2200, RHD4CTUN1Z5STG21900, RHD4CZ5L07MV3300 | -115.02d |
| RHD4CZ5L07MV2400 |  | Backfilling of Duct Banks for Medium Voltage Network - (RD-L-7)-Z5-L07-MV | 7d | 2027-09-11 | 2027-09-19 | RHD4CZ5L07MV2300 | -115.02d |
|  | 3495 | **RHD4-02-002-L07-(MV)-Medium Voltage cables 3Cx 500 mm²** |  | 2027-08-05 | 2027-08-29 |  |  |
| RHD4CZ5L07MV3100 |  | Installation of Medium Voltage Cables 3Cx 500 mm² - (RD-L-7)-Z5-L07-MV | 9d | 2027-08-05 | 2027-08-16 | RHD4CZ5L07MV1100, RHD4ENMSMV2000, RHD4ENMSMV2010 | -113.02d |
| RHD4CZ5L07MV3200 |  | Joints Installation of Medium Voltage Cables 3Cx 500 mm² - (RD-L-7)-Z5-L07-MV | 3d | 2027-08-16 | 2027-08-19 | RHD4CZ5L07MV3100, RHD4PRSHLDOSMV1300, RHD4PRSHLSTAGMV1300 | -113.02d |
| RHD4CZ5L07MV3300 |  | Testing of Medium Voltage Cables 3Cx 500 mm² - (RD-L-7)-Z5-L07-MV | 8d | 2027-08-19 | 2027-08-29 | RHD4CZ5L07MV3200, RHD4CZ5L07MV1200 | -113.02d |
|  | 1984 | **RHD4-02-002-L07-(MV)-Unit Substations** |  |  |  |  |  |
|  | 5388 | **RHD4-02-002-L07-(MV)-Normally open Point (Outdoor Type)** |  |  |  |  |  |
|  | 3499 | **RHD4-02-002-Z5-L07-Low Voltage Network - LV** |  | 2027-02-28 | 2027-09-19 |  |  |
|  | 3500 | **RHD4-02-002-L07-(LV)-Low Voltage duct banks** |  | 2027-02-28 | 2027-03-13 |  |  |
| RHD4CZ5L07LV2100 |  | Excavation of Duct Banks for Low Voltage Network - (RD-L-7)-Z5-L07-LV | 2d | 2027-02-28 | 2027-03-02 | RHD4ENSDZ5APPLV160, RHD4CZ5L07PT2400 | -156.02d |
| RHD4CZ5L07LV2200 |  | Installation of Duct Banks for Low Voltage Network - (RD-L-7)-Z5-L07-LV | 2d | 2027-03-02 | 2027-03-04 | RHD4CZ5L07LV2100, RHD4PRSHLDOSLV1000, RHD4PRSHLSTAGLV1000 | -154.02d |
| RHD4CZ5L07LV2300 |  | Pouring of Duct Banks for Low Voltage Network - (RD-L-7)-Z5-L07-LV | 2d | 2027-03-04 | 2027-03-07 | RHD4CZ5L07LV2200 | -150.02d |
| RHD4CZ5L07LV2400 |  | Backfilling of Duct Banks for Low Voltage Network - (RD-L-7)-Z5-L07-LV | 2d | 2027-03-07 | 2027-03-13 | RHD4CZ5L07LV2300 | -148.02d |
|  | 3502 | **RHD4-02-002-L07-(LV)-Low Voltage cables** |  | 2027-08-05 | 2027-09-07 |  |  |
| RHD4CZ5L07LV3100 |  | Excavation for Low Voltage Cables for Low Voltage Network - (RD-L-7)-Z5-L07-LV | 9d | 2027-08-05 | 2027-08-16 | RHD4ENSDZ5APPLV160, RHD4CZ5L07IRR3202, RHD4CZ5L07SW3500, RHD4CZ5L07MV1100 | -153.02d |
| RHD4CZ5L07LV3200 |  | Cable Laying of Low Voltage Cables for Low Voltage Network - (RD-L-7)-Z5-L07-LV | 7d | 2027-08-16 | 2027-08-24 | RHD4CZ5L07LV3100, RHD4PRSHLDOSLV1100, RHD4ENMSLV2000, RHD4ENMSLV2010, RHD4PRSHLSTAGLV1100 | -148.02d |
| RHD4CZ5L07LV3300 |  | Warning tape and Backfill for Low Voltage Cables for Low Voltage Network - (RD-L-7)-Z5-L07-LV | 7d | 2027-08-24 | 2027-09-01 | RHD4CZ5L07LV3200 | -148.02d |
| RHD4CZ5L07LV3400 |  | Testing of Low Voltage Cables for Low Voltage Network - (RD-L-7)-Z5-L07-LV | 5d | 2027-09-01 | 2027-09-07 | RHD4CZ5L07LV3300 | -148.02d |
|  | 3503 | **RHD4-02-002-L07-(LV)-Low Voltage Distribution Pillars** |  | 2027-09-07 | 2027-09-14 |  |  |
| RHD4CZ5L07LV4100 |  | Leveling for Distribution Pillars for Low Voltage Network - (RD-L-7)-Z5-L07-LV | 2d | 2027-09-07 | 2027-09-09 | RHD4CZ5L07LV3400 | -148.02d |
| RHD4CZ5L07LV4200 |  | Lean Concrete for Distribution Pillars for Low Voltage Network - (RD-L-7)-Z5-L07-LV | 2d | 2027-09-09 | 2027-09-12 | RHD4CZ5L07LV4100 | -148.02d |
| RHD4CZ5L07LV4300 |  | Installation of Distribution Pillars for Low Voltage Network - (RD-L-7)-Z5-L07-LV | 2d | 2027-09-12 | 2027-09-14 | RHD4CZ5L07LV4200, RHD4PRSHLDOSLV1200, RHD4PRSHLDOSLV1300, RHD4PRSHLSTAGLV1200, RHD4PRSHLSTAGLV1300 | -148.02d |
|  | 3504 | **RHD4-02-002-L07-(LV)-Low Voltage Distribution Pillars Earthing** |  |  |  |  |  |
|  | 4257 | **RHD4-02-002-L07-(LV)-Low Voltage Drawpit** |  | 2027-09-14 | 2027-09-19 |  |  |
| RHD4CZ5L07LV5100 |  | Excavation of Drawpit size 900x900x1000mm for Low Voltage Network - (RD-L-7)-Z5-L07-LV | 2d | 2027-09-14 | 2027-09-16 | RHD4CZ5L07LV2400, RHD4CZ5L07LV4300 | -131.02d |
| RHD4CZ5L07LV5200 |  | Installation of Drawpit size 900x900x1000mm for Low Voltage Network - (RD-L-7)-Z5-L07-LV | 2d | 2027-09-16 | 2027-09-19 | RHD4CZ5L07LV5100 | -131.02d |
|  | 3505 | **RHD4-02-002-Z5-L07-Street Lighting Network - SL** |  | 2027-03-02 | 2027-12-26 |  |  |
|  | 3506 | **RHD4-02-002-L07-(SL)-Street Lighting duct banks** |  | 2027-03-02 | 2027-03-25 |  |  |
| RHD4CZ5L07SL2100 |  | Excavation of Duct Banks for Street Lighting Network - (RD-L-7)-Z5-L07-SL | 4d | 2027-03-02 | 2027-03-07 | RHD4CZ5L07LV2100, RHD4ENSDZ5APPSL170 | -156.02d |
| RHD4CZ5L07SL2200 |  | Installation of Duct Banks for Street Lighting Network - (RD-L-7)-Z5-L07-SL | 6d | 2027-03-07 | 2027-03-17 | RHD4CZ5L07SL2100, RHD4CZ5L07LV2200, RHD4PRSHLDOSSL1000, RHD4PRSHLSTAGSL1000 | -156.02d |
| RHD4CZ5L07SL2300 |  | Pouring of Duct Banks for Street Lighting Network - (RD-L-7)-Z5-L07-SL | 4d | 2027-03-17 | 2027-03-22 | RHD4CZ5L07SL2200, RHD4CZ5L07LV2300 | -156.02d |
| RHD4CZ5L07SL2400 |  | Backfilling of Duct Banks for Street Lighting Network - (RD-L-7)-Z5-L07-SL | 3d | 2027-03-22 | 2027-03-25 | RHD4CZ5L07SL2300, RHD4CZ5L07LV2400, RHD4CZ5L07IRR3203 | -156.02d |
|  | 3507 | **RHD4-02-002-L07-(SL)-Street Lighting Drawpit** |  | 2027-09-19 | 2027-09-25 |  |  |
| RHD4CZ5L07SL5100 |  | Excavation of Drawpit size 600x600x900mm for Street Lighting Network - (RD-L-7)-Z5-L07-SL | 2d | 2027-09-19 | 2027-09-21 | RHD4CZ5L07SL2300, RHD4ENSDZ5APPSL170, RHD4CZ5L07LV5200 | -131.02d |
| RHD4CZ5L07SL5200 |  | Installation of Drawpit size 600x600x900mm for Street Lighting Network - (RD-L-7)-Z5-L07-SL | 2d | 2027-09-21 | 2027-09-25 | RHD4CZ5L07SL5100, RHD4PRSHLDOSSL1400, RHD4PRSHLSTAGSL1400 | -131.02d |
|  | 3508 | **RHD4-02-002-L07-(SL)-Street Lighting cables** |  | 2027-09-25 | 2027-11-08 |  |  |
| RHD4CZ5L07SL3100 |  | Excavation for Street Lighting Cables for Street Lighting Network - (RD-L-7)-Z5-L07-SL | 12d | 2027-09-25 | 2027-10-09 | RHD4ENSDZ5APPSL170, RHD4CZ5L07SL5200, RHD4CZ5L07MV3401 | -131.02d |
| RHD4CZ5L07SL3200 |  | Cable Laying of Street Lighting Cables for Street Lighting Network - (RD-L-7)-Z5-L07-SL | 10d | 2027-10-09 | 2027-10-20 | RHD4CZ5L07SL3100, RHD4PRSHLDOSSL1100, RHD4ENMSSL2000, RHD4ENMSSL2010, RHD4PRSHLSTAGSL1100, RHD4CZ5L07MV2400 | -131.02d |
| RHD4CZ5L07SL3300 |  | Warning tape and Backfill for Street Lighting Cables for Street Lighting Network - (RD-L-7)-Z5-L07-SL | 10d | 2027-10-20 | 2027-11-01 | RHD4CZ5L07SL3200 | -131.02d |
| RHD4CZ5L07SL3400 |  | Testing of Street Lighting Cables for Street Lighting Network - (RD-L-7)-Z5-L07-SL | 6d | 2027-11-01 | 2027-11-08 | RHD4CZ5L07SL3300 | -131.02d |
|  | 3509 | **RHD4-02-002-L07-(SL)-Street Lighting Poles** |  | 2027-11-08 | 2027-12-19 |  |  |
| RHD4CZ5L07SL1100 |  | Excavation for RC Base for Lighting Poles for Street Lighting Network - (RD-L-7)-Z5-L07-SL | 6d | 2027-11-08 | 2027-11-15 | RHD4ENSDZ5APPSL170, RHD4CZ5L07SL3400 | -131.02d |
| RHD4CZ5L07SL1200 |  | Installation for RC Base for Lighting Poles for Street Lighting Network - (RD-L-7)-Z5-L07-SL | 6d | 2027-11-15 | 2027-11-22 | RHD4CZ5L07SL1100 | -131.02d |
| RHD4CZ5L07SL1300 |  | Backfill for RC Base for Lighting Poles for Street Lighting Network - (RD-L-7)-Z5-L07-SL | 6d | 2027-11-22 | 2027-11-29 | RHD4CZ5L07SL1200 | -131.02d |
| RHD4CZ5L07SL1400 |  | Installation for Lighting Poles for Street Lighting Network - (RD-L-7)-Z5-L07-SL | 9d | 2027-11-29 | 2027-12-09 | RHD4CZ5L07SL1300, RHD4CZ5L07SL3400, RHD4PRSHLDOSSL1200, RHD4ENMSSL2000, RHD4ENMSSL2010, RHD4PRSHLSTAGSL1200 | -131.02d |
| RHD4CZ5L07SL1500 |  | Luminaire Installation for Lighting Poles for Street Lighting Network - (RD-L-7)-Z5-L07-SL | 6d | 2027-12-12 | 2027-12-19 | RHD4CZ5L07SL1400, RHD4CZ5L07SL6100, RHD4PRSHLDOSSL1300, RHD4PRSHLSTAGSL1300 | -131.02d |
|  | 3511 | **RHD4-02-002-L07-(SL)-Street Lighting Earthing System** |  | 2027-12-09 | 2027-12-12 |  |  |
| RHD4CZ5L07SL6100 |  | Installation of Earthing for Lighting Poles and Fedder Pillers for Street Lighting Network - (RD-L-7)-Z5-L07-SL | 2d | 2027-12-09 | 2027-12-12 | RHD4CZ5L07SL1400, RHD4ENMSER2000, RHD4ENMSER2010 | -131.02d |
|  | 5023 | **RHD4-02-002-L07-(SL)-Street Lighting Feeder Pillars** |  | 2027-12-19 | 2027-12-26 |  |  |
| RHD4CZ5L07SL4100 |  | Leveling for Distribution Pillars for Street Lighting Network - (RD-L-7)-Z5-L07-SL | 2d | 2027-12-19 | 2027-12-21 | RHD4CZ5L07SL1500, RHD4CZ1C081CCTV6100 | -131.02d |
| RHD4CZ5L07SL4200 |  | Lean Concrete for Distribution Pillars for Street Lighting Network - (RD-L-7)-Z5-L07-SL | 2d | 2027-12-21 | 2027-12-23 | RHD4CZ5L07SL4100 | -131.02d |
| RHD4CZ5L07SL4300 |  | Installation of Distribution Pillars for Street Lighting Network - (RD-L-7)-Z5-L07-SL | 2d | 2027-12-23 | 2027-12-26 | RHD4CZ5L07SL4200 | -131.02d |
|  | 3517 | **RHD4-02-002-Z5-L07-Telecommunications Network - TC** |  | 2027-12-26 | 2028-03-15 |  |  |
|  | 3518 | **RHD4-02-002-L07-(TC)-Telecommunications Ducts** |  | 2027-12-26 | 2028-03-15 |  |  |
| RHD4CZ5L07TC2100 |  | Excavation of HDPE Ducts for Telecom Network - (RD-L-7)-Z5-L07-TC | 9d | 2027-12-26 | 2028-01-05 | RHD4ENSDZ5APPTC190, RHD4CZ5L07SL4300, RHD4CZ9L06ICT5200 | -131.02d |
| RHD4CZ5L07TC2200 |  | Installation of HDPE Ducts for Telecom Network - (RD-L-7)-Z5-L07-TC | 13d | 2028-01-05 | 2028-01-20 | RHD4CZ5L07TC2100, RHD4PRSHLDOSTC1000, RHD4PRSHLSTAGTC1000 | -131.02d |
| RHD4CZ5L07TC2400 |  | Backfilling of HDPE Ducts for Telecom Network - (RD-L-7)-Z5-L07-TC | 9d | 2028-03-06 | 2028-03-15 | RHD4CZ5L07TC2200, RHD4CZ5L07TC5200, RHD4CZ5L07SL1500, RHD4CZ4CH5ST1320, RHD4CZ7A012ICT5200 | -166d |
|  | 3519 | **RHD4-02-002-L07-(TC)-Telecommunications Manholes** |  | 2028-02-03 | 2028-03-05 |  |  |
| RHD4CZ5L07TC5100 |  | Excavation for Manholes for Telecom Network - (RD-L-7)-Z5-L07-TC | 6d | 2028-02-03 | 2028-02-10 | RHD4CZ5L07TC2100, RHD4ENSDZ5APPTC190, RHD4CZ4A013RD7100 | -156.02d |
| RHD4CZ5L07TC5200 |  | Installation of Manholes for Telecom Network - (RD-L-7)-Z5-L07-TC | 7d | 2028-02-23 | 2028-03-05 | RHD4CZ5L07TC5100, RHD4CZ5L07TC2200 SS, RHD4PRSHLDOSTC1200, RHD4PRSHLSTAGTC1200, RHD4CZ1C081RD8100 | -166d |

| ID | WBS | Task | Duration | Start | Finish | Predecessors | Total float |
| --- | --- | --- | --- | --- | --- | --- | --- |
|  | 3520 | **RHD4-02-002-L07-(TC)-Telecomminications Road Crossings** |  |  |  |  |  |
|  | 3521 | **RHD4-02-002-Z5-L07-Information and Communication Technologies - ICT** |  | 2027-01-02 | 2028-05-03 |  |  |
|  | 3522 | **RHD4-02-002-L07-(ICT)-Information and Communication Technologies Ducts** |  | 2028-03-16 | 2028-05-03 |  |  |
| RHD4CZ5L07ICT2100 |  | Excavation of HDPE Ducts for ICT Network - (RD-L-7)-Z5-L07-ICT | 12d | 2028-03-16 | 2028-03-29 | RHD4CZ5L07ICT3400, RHD4ENSDZ5APPICT200, RHD4CZ5L07TC2400, RHD4CZ5L07TC5200, RHD4GNSLZ8FT1600, RHD4GNSLZ1FT1600 | -147d |
| RHD4CZ5L07ICT2200 |  | Installation of HDPE Ducts for ICT Network - (RD-L-7)-Z5-L07-ICT | 18d | 2028-03-30 | 2028-04-19 | RHD4CZ5L07ICT2100, RHD4PRSHLDOSICT1000, RHD4PRSHLSTAGICT1000, RHD4CZ8C014RD3200 | -147d |
| RHD4CZ5L07ICT2400 |  | Backfilling of HDPE Ducts for ICT Network - (RD-L-7)-Z5-L07-ICT | 12d | 2028-04-20 | 2028-05-03 | RHD4CZ5L07ICT2200, RHD4CZ5L07ICT5200, RHD4GNLVZ8FT1500, RHD4GNCCTVZ6FT2000, RHD4CZ5A014CCTV1500 | -147d |
|  | 3523 | **RHD4-02-002-L07-(ICT)-Information and Communication Technologies Manholes** |  | 2028-03-30 | 2028-04-12 |  |  |
| RHD4CZ5L07ICT5100 |  | Excavation for Manholes for ICT Network - (RD-L-7)-Z5-L07-ICT | 6d | 2028-03-30 | 2028-04-05 | RHD4CZ5L07ICT2100, RHD4ENSDZ5APPICT200 | -141d |
| RHD4CZ5L07ICT5200 |  | Installation of Manholes for ICT Network - (RD-L-7)-Z5-L07-ICT | 6d | 2028-04-06 | 2028-04-12 | RHD4CZ5L07ICT5100, RHD4CZ5L07ICT2200 SS, RHD4PRSHLDOSICT1200, RHD4PRSHLSTAGICT1200 | -141d |
|  | 3524 | **RHD4-02-002-L07-(ICT)-Information and Communication Technologies Road Crossings** |  | 2027-01-02 | 2027-02-27 |  |  |
| RHD4CZ5L07ICT3100 |  | Excavation for Road Crossings for ICT Network - (RD-L-7)-Z5-L07-ICT | 3d | 2027-01-02 | 2027-01-04 | RHD4ENSDZ5APPICT200, RHD4CZ5L07ST3101 | -147d |
| RHD4CZ5L07ICT3200 |  | Installation of Road Crossings for ICT Network - (RD-L-7)-Z5-L07-ICT | 4d | 2027-02-14 | 2027-02-17 | RHD4CZ5L07ICT3100, RHD4PRSHLDOSICT1100, RHD4PRSHLSTAGICT1100 | -181d |
| RHD4CZ5L07ICT3300 |  | Pouring of Road Crossings for ICT Network - (RD-L-7)-Z5-L07-ICT | 4d | 2027-02-18 | 2027-02-23 | RHD4CZ5L07ICT3200 | -181d |
| RHD4CZ5L07ICT3400 |  | Backfilling of Road Crossings for ICT Network - (RD-L-7)-Z5-L07-ICT | 3d | 2027-02-24 | 2027-02-27 | RHD4CZ5L07ICT3300 | -181d |
|  | 3512 | **RHD4-02-002-Z5-L07-Landscape Network - LS** |  |  |  |  |  |
|  | 3513 | **RHD4-02-002-L07-(LS)-Landscape Lighting cables** |  |  |  |  |  |
|  | 3514 | **RHD4-02-002-L07-(LS)-Landscape Feeder Pillars** |  |  |  |  |  |
|  | 3515 | **RHD4-02-002-L07-(LS)-Landscape Bollard Poles** |  |  |  |  |  |
|  | 3516 | **RHD4-02-002-L07-(LS)-Landscape Feeder Pillars Earthing** |  |  |  |  |  |
|  | 3525 | **RHD4-02-002-Z5-L07-Security Network - CCTV** |  | 2028-05-08 | 2028-06-08 |  |  |
|  | 3526 | **RHD4-02-002-L07-(CCTV)-Civil Works** |  | 2028-05-08 | 2028-05-18 |  |  |
| RHD4CZ5L07CCTV2100 |  | Civil Works for Security Network - (RD-L-7)-Z5-L07-CCTV | 10d | 2028-05-08 | 2028-05-18 | RHD4CZ5L07TC2400, RHD4CZ5L07ICT2400 | -147d |
|  | 3527 | **RHD4-02-002-L07-(CCTV)-CCTV Poles** |  | 2028-05-20 | 2028-05-30 |  |  |
| RHD4CZ5L07CCTV1100 |  | Excavation for RC Base for CCTV Poles for Security Network - (RD-L-7)-Z5-L07-CCTV | 2d | 2028-05-20 | 2028-05-21 | RHD4CZ5L07CCTV2100, RHD4ENSDZ5APPCCTV210 | -147d |
| RHD4CZ5L07CCTV1200 |  | Installation for RC Base for CCTV Poles for Security Network - (RD-L-7)-Z5-L07-CCTV | 2d | 2028-05-22 | 2028-05-23 | RHD4CZ5L07CCTV1100 | -147d |
| RHD4CZ5L07CCTV1300 |  | Backfill for RC Base for CCTV Poles for Security Network - (RD-L-7)-Z5-L07-CCTV | 2d | 2028-05-24 | 2028-05-25 | RHD4CZ5L07CCTV1200 | -147d |
| RHD4CZ5L07CCTV1400 |  | Installation for CCTV Poles for Security Network - (RD-L-7)-Z5-L07-CCTV | 2d | 2028-05-27 | 2028-05-28 | RHD4CZ5L07CCTV1300, RHD4PRSHLDOSCCTV1000, RHD4PRSHLSTACCTV1000 | -147d |
| RHD4CZ5L07CCTV1500 |  | Protection post Installation for CCTV Poles for Security Network - (RD-L-7)-Z5-L07-CCTV | 2d | 2028-05-29 | 2028-05-30 | RHD4CZ5L07CCTV1400 | -139d |
|  | 3528 | **RHD4-02-002-L07-(CCTV)-Camera** |  | 2028-05-31 | 2028-06-01 |  |  |
| RHD4CZ5L07CCTV3100 |  | Installation for Cameras for Security Network - (RD-L-7)-Z5-L07-CCTV | 2d | 2028-05-31 | 2028-06-01 | RHD4CZ5L07CCTV1400, RHD4CZ5L07CCTV4100, RHD4PRSHLDOSCCTV1100, RHD4PRSHLSTACCTV1100, RHD4CZ6A02CCTV6100 | -147d |
|  | 3529 | **RHD4-02-002-L07-(CCTV)-Power and Infrastructure** |  | 2028-05-29 | 2028-06-01 |  |  |
| RHD4CZ5L07CCTV4100 |  | Installation of Power outlet, UPS and midspan for PTZ Camerafor Cameras for Security Network - (RD-L-7)-Z5-L07-CCTV | 2d | 2028-05-29 | 2028-05-30 | RHD4CZ5L07CCTV1400, RHD4PRSHLDOSCCTV1300, RHD4PRSHLSTACCTV1300, RHD4HOASZ6APPSL170, RHD4CZ9L02CCTV6100 | -147d |
| RHD4CZ5L07CCTV4200 |  | Short Range Wireless PoP wireless Bridgefor CCTV Poles for Security Network - (RD-L-7)-Z5-L07-CCTV | 2d | 2028-05-31 | 2028-06-01 | RHD4CZ5L07CCTV4100 | -147d |
|  | 3531 | **RHD4-02-002-L07-(CCTV)-CCTV Panels and Components** |  | 2028-06-03 | 2028-06-08 |  |  |
| RHD4CZ5L07CCTV6100 |  | Installation for CCTV Panels for Security Network - (RD-L-7)-Z5-L07-CCTV | 6d | 2028-06-03 | 2028-06-08 | RHD4CZ5L07CCTV4200, RHD4CZ5L07CCTV3100, RHD4PRSHLDOSCCTV1200, RHD4PRSHLSTACCTV1200, RHD4PRLOLSTACCTV1001 | -147d |
|  | 2217 | **RHD4-02-002-Z4** |  | 2026-06-30 | 2028-03-09 |  |  |
|  | 8270 | **RHD4-02-002-Z4-L01** |  | 2027-01-10 | 2027-10-17 |  |  |
|  | 8301 | **RHD4-02-002-Z4-L01-Crossings Sewage Network - SWCr** |  |  |  |  |  |
|  | 8311 | **RHD4-02-002-L01-(SWCr)-MH Works - 1200 mm diameter** |  |  |  |  |  |
|  | 8312 | **RHD4-02-002-L01-(SWCr)-MH Works - 1200 mm diameter with Back drop** |  |  |  |  |  |
|  | 8307 | **RHD4-02-002-L01-(SWCr)-UPVC Pipes - 200 mm diameter** |  |  |  |  |  |
|  | 8345 | **RHD4-02-002-Z4-L01-Crossings Potable Network - PTCr** |  |  |  |  |  |
|  | 8347 | **RHD4-02-002-L01-(PTCr)-HDPE Pipes - 160 mm diameter** |  |  |  |  |  |
|  | 8346 | **RHD4-02-002-L01-(PTCr)-HDPE Pipes - 110 mm diameter** |  |  |  |  |  |
|  | 8351 | **RHD4-02-002-L01-(PTCr)-Gate Valves (Direct Buried)** |  |  |  |  |  |
|  | 8392 | **RHD4-02-002-Z4-L01-Crossings Irrigation Network - IRRC** |  |  |  |  |  |
|  | 8393 | **RHD4-02-002-L01-(IRRC)-HDPE Pipes - 160 mm diameter** |  |  |  |  |  |
|  | 8401 | **RHD4-02-002-L01-(IRRC)-Gate Valves (Direct Buried)** |  |  |  |  |  |
|  | 8404 | **RHD4-02-002-L01-(IRRC)-Wash out Chamber** |  |  |  |  |  |
|  | 8405 | **RHD4-02-002-L01-(IRRC)-Wash out Valves** |  |  |  |  |  |
|  | 8449 | **RHD4-02-002-Z4-L01-Road Works - RD** |  | 2027-01-21 | 2027-10-02 |  |  |
|  | 8450 | **RHD4-02-002-L01-(RD)-Subgrade** |  | 2027-01-21 | 2027-01-23 |  |  |
| RHD4CZ4L01RD1100 |  | Supply, lay and compaction subgrade compacted thickness 300 mm for Roads - (RD-L-1)-Z4-L01-RD | 2d | 2027-01-21 | 2027-01-23 | RHD4ENSDZ8APPEW100, RHD4ENSDZ8APPRD220, RHD4CZ4L01MV2400, RHD4CZ4L01LV2400 | -136d |
|  | 8451 | **RHD4-02-002-L01-(RD)-Aggregate Base Course** |  | 2027-01-24 | 2027-01-25 |  |  |
| RHD4CZ4L01RD2100 |  | Supply, lay and compaction Aggregate base course compacted thickness 300 mmfor Roads - (RD-L-1)-Z4-L01-RD | 2d | 2027-01-24 | 2027-01-25 | RHD4CZ4L01RD1100, RHD4PRSHLDOSRD1000, RHD4PRSHLSTAGRD1000 | -136d |
|  | 8452 | **RHD4-02-002-L01-(RD)-Bituminous base course Two Layers, including (MC1)&(RC2)** |  | 2027-04-03 | 2027-09-18 |  |  |
| RHD4CZ4L01RD3100 |  | Supply, lay and Asphaltic base course including Prime Coat (MC1) for 1st Layer - (RD-L-1)-Z4-L01-RD | 2d | 2027-04-03 | 2027-04-05 | RHD4CZ4L01RD2100, RHD4PRSHLDOSRD1100, RHD4ENMSASPH2000, RHD4ENMSASPH2010, RHD4PRSHLSTAGRD1100, RHD4CZ4C012RD3100, RHD4CZ4RA02RD2100 | -189.02d |
| RHD4CZ4L01RD3200 |  | Supply, lay and Asphaltic base course including Tack Coat (RC2) for 2nd Layer - (RD-L-1)-Z4-L01-RD | 2d | 2027-09-15 | 2027-09-18 | RHD4CZ4L01RD3100, RHD4PRSHLDOSRD1100, RHD4PRSHLSTAGRD1100, RHD4CZ4L01CCTV2100 | -163.02d |
|  | 8454 | **RHD4-02-002-L01-(RD)-Precast Concrete Curb** |  | 2027-09-18 | 2027-09-25 |  |  |
| RHD4CZ4L01RD5100 |  | Supply and installation Precast Concrete Kerb for Roads - (RD-L-1)-Z4-L01-RD | 5d | 2027-09-18 | 2027-09-25 | RHD4CZ4L01RD3200, RHD4PRSHLDOSRD1200, RHD4ENMSRD2000, RHD4ENMSRD2010, RHD4PRSHLSTAGRD1200 | -163.02d |
|  | 8457 | **RHD4-02-002-L01-(RD)-Traffic Signage** |  | 2027-09-25 | 2027-10-02 |  |  |
| RHD4CZ4L01RD8100 |  | Installation of Traffic Signage for Road Network - (RD-L-1)-Z4-L01-RD | 6d | 2027-09-25 | 2027-10-02 | RHD4CZ4L01RD5100, RHD4CZ4L01TC2400, RHD4CZ4L01ICT2400, RHD4PRSHLDOSRD1600, RHD4PRSHLSTAGRD1600, RHD4CZ4L01SL5200 | -158.02d |
|  | 8455 | **RHD4-02-002-L01-(RD)-Precast Interlocking Block Pavers** |  |  |  |  |  |
|  | 8453 | **RHD4-02-002-L01-(RD)-Bituminous concrete wearing course including tack coat (RC2)** |  | 2027-09-25 | 2027-09-27 |  |  |
| RHD4CZ4L01RD4100 |  | Supply, lay and compaction Asphaltic wearing course including tack Coat (RC2)for Road Network - (RD-L-1)-Z4-L01-RD | 2d | 2027-09-25 | 2027-09-27 | RHD4CZ4L01RD5100 | -163.02d |
|  | 8456 | **RHD4-02-002-L01-(RD)-Pavement Marking** |  | 2027-09-27 | 2027-10-02 |  |  |
| RHD4CZ4L01RD7100 |  | Pavement Markings for Road Network - (RD-L-1)-Z4-L01-RD | 4d | 2027-09-27 | 2027-10-02 | RHD4CZ4L01RD4100, RHD4PRSHLDOSRD1500, RHD4PRSHLSTAGRD1500 | -163.02d |
|  | 8274 | **RHD4-02-002-Z4-L01-Storm Network - ST** |  |  |  |  |  |
|  | 8291 | **RHD4-02-002-L01-(ST)-MH Works - 1200 mm diameter** |  |  |  |  |  |
|  | 8293 | **RHD4-02-002-L01-(ST)-MH Works - 2000 mm diameter** |  |  |  |  |  |

| ID | WBS | Task | Duration | Start | Finish | Predecessors | Total float |
| --- | --- | --- | --- | --- | --- | --- | --- |
|  | 8282 | **RHD4-02-002-L01-(ST)-GRP Pipes - 1100 mm diameter** |  |  |  |  |  |
|  | 8276 | **RHD4-02-002-L01-(ST)-GRP Pipes - 500 mm diameter** |  |  |  |  |  |
|  | 8275 | **RHD4-02-002-L01-(ST)-GRP Pipes - 400 mm diameter** |  |  |  |  |  |
|  | 8289 | **RHD4-02-002-L01-(ST)-UPVC Pipes - 300 mm diameter** |  |  |  |  |  |
|  | 8297 | **RHD4-02-002-L01-(ST)-Concrete Encasement** |  |  |  |  |  |
|  | 8298 | **RHD4-02-002-Z4-L01-Catch Basin - ST** |  |  |  |  |  |
|  | 8299 | **RHD4-02-002-L01-(ST)-Single Catch Basin Works** |  |  |  |  |  |
|  | 8323 | **RHD4-02-002-Z4-L01-Sewage Network - SW** |  |  |  |  |  |
|  | 8333 | **RHD4-02-002-L01-(SW)-MH Works - 1200 mm diameter** |  |  |  |  |  |
|  | 8329 | **RHD4-02-002-L01-(SW)-UPVC Pipes - 200 mm diameter** |  |  |  |  |  |
|  | 8360 | **RHD4-02-002-Z4-L01-Potable Network - PT** |  | 2027-06-14 | 2027-07-10 |  |  |
|  | 8362 | **RHD4-02-002-L01-(PT)-HDPE Pipes - 160 mm diameter** |  | 2027-06-14 | 2027-06-28 |  |  |
| RHD4CZ4L01PT1101 |  | Excavation works for HDPE Pipline 160 mm - (RD-L-1)-Z4-L01-PT | 2d | 2027-06-14 | 2027-06-16 | RHD4ENSDZ8APPPT130, RHD4ENMSPT2000, RHD4CZ4A013PT1103, RHD4CZ3C083PT3202 | -153.02d |
| RHD4CZ4L01PT1201 |  | Bedding works for HDPE Pipline 160 mm - (RD-L-1)-Z4-L01-PT | 2d | 2027-06-16 | 2027-06-19 | RHD4CZ4L01PT1101 | -153.02d |
| RHD4CZ4L01PT1301 |  | Installing for HDPE Pipline 160 mm - (RD-L-1)-Z4-L01-PT | 2d | 2027-06-19 | 2027-06-21 | RHD4CZ4L01PT1201, RHD4PRSHLDOSPT1000, RHD4PRSHLSTAGPT1000 | -153.02d |
| RHD4CZ4L01PT1401 |  | Primary Test for HDPE Pipline 160 mm - (RD-L-1)-Z4-L01-PT | 2d | 2027-06-23 | 2027-06-26 | RHD4CZ4L01PT1301, RHD4CZ4L01PT3100 | -153.02d |
| RHD4CZ4L01PT1501 |  | Backfilling and warning tape works for HDPE Pipline 160 mm - (RD-L-1)-Z4-L01-PT | 2d | 2027-06-26 | 2027-06-28 | RHD4CZ4L01PT1401 | -153.02d |
|  | 8366 | **RHD4-02-002-L01-(PT)-Gate Valves (Direct Buried)** |  | 2027-06-21 | 2027-06-30 |  |  |
| RHD4CZ4L01PT3100 |  | Installation for Direct Buried Gate Valves - (RD-L-1)-Z4-L01-PT | 2d | 2027-06-21 | 2027-06-23 | RHD4CZ4L01PT1301, RHD4PRSHLDOSPT1200, RHD4PRSHLSTAGPT1200 | -153.02d |
| RHD4CZ4L01PT3200 |  | Stem and Service box for Direct Buried Gate Valves - (RD-L-1)-Z4-L01-PT | 2d | 2027-06-28 | 2027-06-30 | RHD4CZ4L01PT3100, RHD4CZ4L01PT1501, RHD4PRSHLDOSPT1300 | -149.02d |
|  | 8369 | **RHD4-02-002-L01-(PT)-Wash out Valve Chambers** |  |  |  |  |  |
|  | 8370 | **RHD4-02-002-L01-(PT)-Wash out Valves** |  |  |  |  |  |
|  | 8371 | **RHD4-02-002-L01-(PT)-Air Valve Chambers** |  |  |  |  |  |
|  | 8372 | **RHD4-02-002-L01-(PT)-Air Valves** |  |  |  |  |  |
|  | 8373 | **RHD4-02-002-L01-(PT)-Fire Hydrant** |  | 2027-06-28 | 2027-07-10 |  |  |
| RHD4CZ4L01PT4100 |  | Excavation and Bedding and Pipe Installation for Fire Hydrant - (RD-L-1)-Z4-L01-PT | 2d | 2027-06-28 | 2027-06-30 | RHD4CZ4L01PT1501, RHD4ENSDZ8APPPT130 | -153.02d |
| RHD4CZ4L01PT4200 |  | Valve Installation for Fire Hydrant - (RD-L-1)-Z4-L01-PT | 2d | 2027-06-30 | 2027-07-03 | RHD4CZ4L01PT4100 | -153.02d |
| RHD4CZ4L01PT4300 |  | Stem for Fire Hydrant - (RD-L-1)-Z4-L01-PT | 2d | 2027-07-03 | 2027-07-05 | RHD4CZ4L01PT4200 | -153.02d |
| RHD4CZ4L01PT4400 |  | Fire Installation for Fire Hydrant - (RD-L-1)-Z4-L01-PT | 2d | 2027-07-05 | 2027-07-07 | RHD4CZ4L01PT4300, RHD4PRSHLDOSPT1500, RHD4PRSHLSTAGPT1500 | -153.02d |
| RHD4CZ4L01PT4500 |  | Protection Barriers for Fire Hydrant - (RD-L-1)-Z4-L01-PT | 2d | 2027-07-07 | 2027-07-10 | RHD4CZ4L01PT4400 | -153.02d |
|  | 8375 | **RHD4-02-002-Z4-L01-Irrigation Network - IRR** |  |  |  |  |  |
|  | 8376 | **RHD4-02-002-L01-(IRR)-HDPE Pipes - 160 mm diameter** |  |  |  |  |  |
|  | 8384 | **RHD4-02-002-L01-(IRR)-Gate Valves (Direct Buried)** |  |  |  |  |  |
|  | 8389 | **RHD4-02-002-L01-(IRR)-Air Valve Chamber** |  |  |  |  |  |
|  | 8390 | **RHD4-02-002-L01-(IRR)-Air Valves** |  |  |  |  |  |
|  | 8409 | **RHD4-02-002-Z4-L01-Medium Voltage Network - MV** |  | 2027-01-10 | 2027-04-22 |  |  |
|  | 8410 | **RHD4-02-002-L01-(MV)-Medium Voltage cable trench** |  | 2027-04-05 | 2027-04-20 |  |  |
| RHD4CZ4L01MV1100 |  | Excavation for Medium Voltage Trench - (RD-L-1)-Z4-L01-MV | 2d | 2027-04-05 | 2027-04-07 | RHD4ENSDZ8APPMV150, RHD4CZ4L01RD3100 | -189.02d |
| RHD4CZ4L01MV1200 |  | Trench Backfilling for Medium Voltage Network - (RD-L-1)-Z4-L01-MV | 2d | 2027-04-18 | 2027-04-20 | RHD4CZ4L01MV3200 | -189.02d |
|  | 8411 | **RHD4-02-002-L01-(MV)-Medium Voltage duct banks** |  | 2027-01-10 | 2027-01-19 |  |  |
| RHD4CZ4L01MV2100 |  | Excavation of Duct Banks for Medium Voltage Network - (RD-L-1)-Z4-L01-MV | 2d | 2027-01-10 | 2027-01-11 | RHD4ENSDZ8APPMV150, RHD4CZ3C083ST1102 | -136d |
| RHD4CZ4L01MV2200 |  | Installation of Duct Banks for Medium Voltage Network - (RD-L-1)-Z4-L01-MV | 3d | 2027-01-12 | 2027-01-14 | RHD4CZ4L01MV2100, RHD4PRSHLDOSMV1000, RHD4PRSHLSTAGMV1000 | -135d |
| RHD4CZ4L01MV2300 |  | Pouring of Duct Banks for Medium Voltage Network - (RD-L-1)-Z4-L01-MV | 2d | 2027-01-16 | 2027-01-17 | RHD4CZ4L01MV2200 | -135d |
| RHD4CZ4L01MV2400 |  | Backfilling of Duct Banks for Medium Voltage Network - (RD-L-1)-Z4-L01-MV | 2d | 2027-01-18 | 2027-01-19 | RHD4CZ4L01MV2300 | -135d |
|  | 8412 | **RHD4-02-002-L01-(MV)-Medium Voltage cables 3Cx 500 mm²** |  | 2027-04-07 | 2027-04-22 |  |  |
| RHD4CZ4L01MV3100 |  | Installation of Medium Voltage Cables 3Cx 500 mm² - (RD-L-1)-Z4-L01-MV | 7d | 2027-04-07 | 2027-04-15 | RHD4CZ4L01MV1100, RHD4PRSHLDOSMV1100, RHD4ENMSMV2000, RHD4ENMSMV2010, RHD4PRSHLSTAGMV1100 | -189.02d |
| RHD4CZ4L01MV3200 |  | Joints Installation of Medium Voltage Cables 3Cx 500 mm² - (RD-L-1)-Z4-L01-MV | 2d | 2027-04-15 | 2027-04-18 | RHD4CZ4L01MV3100, RHD4PRSHLDOSMV1300, RHD4PRSHLSTAGMV1300 | -189.02d |
| RHD4CZ4L01MV3300 |  | Testing of Medium Voltage Cables 3Cx 500 mm² - (RD-L-1)-Z4-L01-MV | 2d | 2027-04-20 | 2027-04-22 | RHD4CZ4L01MV3200, RHD4CZ4L01MV1200 | -189.02d |
|  | 8413 | **RHD4-02-002-L01-(MV)-Medium Voltage cables 3Cx 50 mm²** |  |  |  |  |  |
|  | 8414 | **RHD4-02-002-L01-(MV)-Normally open Point (Outdoor Type)** |  |  |  |  |  |
|  | 8416 | **RHD4-02-002-Z4-L01-Low Voltage Network - LV** |  | 2027-01-12 | 2027-08-18 |  |  |
|  | 8417 | **RHD4-02-002-L01-(LV)-Low Voltage duct banks** |  | 2027-01-12 | 2027-01-20 |  |  |
| RHD4CZ4L01LV2100 |  | Excavation of Duct Banks for Low Voltage Network - (RD-L-1)-Z4-L01-LV | 2d | 2027-01-12 | 2027-01-13 | RHD4ENSDZ8APPLV160, RHD4CZ4L01MV2100 | -136d |
| RHD4CZ4L01LV2200 |  | Installation of Duct Banks for Low Voltage Network - (RD-L-1)-Z4-L01-LV | 2d | 2027-01-14 | 2027-01-16 | RHD4CZ4L01LV2100, RHD4PRSHLDOSLV1000, RHD4PRSHLSTAGLV1000 | -136d |
| RHD4CZ4L01LV2300 |  | Pouring of Duct Banks for Low Voltage Network - (RD-L-1)-Z4-L01-LV | 2d | 2027-01-17 | 2027-01-18 | RHD4CZ4L01LV2200 | -136d |
| RHD4CZ4L01LV2400 |  | Backfilling of Duct Banks for Low Voltage Network - (RD-L-1)-Z4-L01-LV | 2d | 2027-01-19 | 2027-01-20 | RHD4CZ4L01LV2300 | -136d |
|  | 8419 | **RHD4-02-002-L01-(LV)-Low Voltage cables** |  | 2027-08-09 | 2027-08-18 |  |  |
| RHD4CZ4L01LV3100 |  | Excavation for Low Voltage Cables for Low Voltage Network - (RD-L-1)-Z4-L01-LV | 2d | 2027-08-09 | 2027-08-11 | RHD4CZ4L01LV2400, RHD4CZ4L01MV1200, RHD4ENSDZ8APPLV160, RHD4CZ4L01SL3300 | -163.02d |
| RHD4CZ4L01LV3200 |  | Cable Laying of Low Voltage Cables for Low Voltage Network - (RD-L-1)-Z4-L01-LV | 2d | 2027-08-11 | 2027-08-14 | RHD4CZ4L01LV3100, RHD4PRSHLDOSLV1100, RHD4ENMSLV2000, RHD4ENMSLV2010, RHD4PRSHLSTAGLV1100 | -163.02d |
| RHD4CZ4L01LV3300 |  | Warning tape and Backfill for Low Voltage Cables for Low Voltage Network - (RD-L-1)-Z4-L01-LV | 2d | 2027-08-14 | 2027-08-16 | RHD4CZ4L01LV3200 | -163.02d |
| RHD4CZ4L01LV3400 |  | Testing of Low Voltage Cables for Low Voltage Network - (RD-L-1)-Z4-L01-LV | 2d | 2027-08-16 | 2027-08-18 | RHD4CZ4L01LV3300 | -163.02d |
|  | 8422 | **RHD4-02-002-Z4-L01-Street Lighting Network - SL** |  | 2027-06-30 | 2027-08-28 |  |  |
|  | 8423 | **RHD4-02-002-L01-(SL)-Street Lighting duct banks** |  | 2027-06-30 | 2027-07-10 |  |  |
| RHD4CZ4L01SL2100 |  | Excavation of Duct Banks for Street Lighting Network - (RD-L-1)-Z4-L01-SL | 2d | 2027-06-30 | 2027-07-03 | RHD4CZ4L01LV2100, RHD4ENSDZ8APPSL170, RHD4CZ4L01PT3200 | -149.02d |
| RHD4CZ4L01SL2200 |  | Installation of Duct Banks for Street Lighting Network - (RD-L-1)-Z4-L01-SL | 2d | 2027-07-03 | 2027-07-05 | RHD4CZ4L01SL2100, RHD4PRSHLDOSSL1000, RHD4PRSHLSTAGSL1000 | -149.02d |
| RHD4CZ4L01SL2300 |  | Pouring of Duct Banks for Street Lighting Network - (RD-L-1)-Z4-L01-SL | 2d | 2027-07-05 | 2027-07-07 | RHD4CZ4L01SL2200 | -149.02d |
| RHD4CZ4L01SL2400 |  | Backfilling of Duct Banks for Street Lighting Network - (RD-L-1)-Z4-L01-SL | 2d | 2027-07-07 | 2027-07-10 | RHD4CZ4L01SL2300, RHD4CZ4L01LV2400 | -149.02d |
|  | 8424 | **RHD4-02-002-L01-(SL)-Street Lighting Drawpit** |  | 2027-08-23 | 2027-08-28 |  |  |
| RHD4CZ4L01SL5100 |  | Excavation of Drawpit size 600x600x900mm for Street Lighting Network - (RD-L-1)-Z4-L01-SL | 2d | 2027-08-23 | 2027-08-25 | RHD4ENSDZ8APPSL170, RHD4CZ4L01SL1400 | -163.02d |
| RHD4CZ4L01SL5200 |  | Installation of Drawpit size 600x600x900mm for Street Lighting Network - (RD-L-1)-Z4-L01-SL | 2d | 2027-08-25 | 2027-08-28 | RHD4CZ4L01SL5100, RHD4PRSHLDOSSL1400, RHD4PRSHLSTAGSL1400, RHD4CZ4A013ST1503 | -157.02d |

| ID | WBS | Task | Duration | Start | Finish | Predecessors | Complete | Total float |
| --- | --- | --- | --- | --- | --- | --- | --- | --- |
|  | 8425 | **RHD4-02-002-L01-(SL)-Street Lighting cables** |  | 2027-08-02 | 2027-08-21 |  |  |  |
| RHD4CZ4L01SL3100 |  | Excavation for Street Lighting Cables for Street Lighting Network - (RD-L-1)-Z4-L01-SL | 2d | 2027-08-02 | 2027-08-04 | RHD4CZ4L01SL1300, RHD4ENSDZ8APPSL170 |  | -163.02d |
| RHD4CZ4L01SL3200 |  | Cable Laying of Street Lighting Cables for Street Lighting Network - (RD-L-1)-Z4-L01-SL | 2d | 2027-08-04 | 2027-08-07 | RHD4CZ4L01SL3100, RHD4PRSHLDOSSL1100, RHD4ENMSSL2000, RHD4ENMSSL2010, RHD4PRSHLSTAGSL1100 |  | -163.02d |
| RHD4CZ4L01SL3300 |  | Warning tape and Backfill for Street Lighting Cables for Street Lighting Network - (RD-L-1)-Z4-L01-SL | 2d | 2027-08-07 | 2027-08-09 | RHD4CZ4L01SL3200 |  | -163.02d |
| RHD4CZ4L01SL3400 |  | Testing of Street Lighting Cables for Street Lighting Network - (RD-L-1)-Z4-L01-SL | 2d | 2027-08-18 | 2027-08-21 | RHD4CZ4L01SL3300, RHD4CZ4L01LV3400 |  | -163.02d |
|  | 8426 | **RHD4-02-002-L01-(SL)-Street Lighting Poles** |  | 2027-07-26 | 2027-08-25 |  |  |  |
| RHD4CZ4L01SL1100 |  | Excavation for RC Base for Lighting Poles for Street Lighting Network - (RD-L-1)-Z4-L01-SL | 2d | 2027-07-26 | 2027-07-28 | RHD4CZ4L01SL2400, RHD4CZ4L01MV1200, RHD4ENSDZ8APPSL170, RHD4CZ3C083SL1100 |  | -163.02d |
| RHD4CZ4L01SL1200 |  | Installation for RC Base for Lighting Poles for Street Lighting Network - (RD-L-1)-Z4-L01-SL | 2d | 2027-07-28 | 2027-07-31 | RHD4CZ4L01SL1100 |  | -163.02d |
| RHD4CZ4L01SL1300 |  | Backfill for RC Base for Lighting Poles for Street Lighting Network - (RD-L-1)-Z4-L01-SL | 2d | 2027-07-31 | 2027-08-02 | RHD4CZ4L01SL1200 |  | -163.02d |
| RHD4CZ4L01SL1400 |  | Installation for Lighting Poles for Street Lighting Network - (RD-L-1)-Z4-L01-SL | 2d | 2027-08-21 | 2027-08-23 | RHD4CZ4L01SL1300, RHD4CZ4L01SL3400, RHD4PRSHLDOSSL1200, RHD4ENMSSL2000, RHD4ENMSSL2010, RHD4PRSHLSTAGSL1200 |  | -163.02d |
| RHD4CZ4L01SL1500 |  | Luminaire Installation for Lighting Poles for Street Lighting Network - (RD-L-1)-Z4-L01-SL | 2d | 2027-08-23 | 2027-08-25 | RHD4CZ4L01SL1400, RHD4PRSHLDOSSL1300, RHD4PRSHLSTAGSL1300 |  | -135.02d |
|  | 8428 | **RHD4-02-002-L01-(SL)-Street Lighting Earthing System** |  |  |  |  |  |  |
|  | 8434 | **RHD4-02-002-Z4-L01-Telecommunications Network - TC** |  | 2027-08-25 | 2027-09-01 |  |  |  |
|  | 8435 | **RHD4-02-002-L01-(TC)-Telecommunications Ducts** |  | 2027-08-25 | 2027-09-01 |  |  |  |
| RHD4CZ4L01TC2100 |  | Excavation of HDPE Ducts for Telecom Network - (RD-L-1)-Z4-L01-TC | 2d | 2027-08-25 | 2027-08-28 | RHD4ENSDZ8APPTC190, RHD4CZ4L01SL2100, RHD4CZ4L01SL5100 |  | -163.02d |
| RHD4CZ4L01TC2200 |  | Installation of HDPE Ducts for Telecom Network - (RD-L-1)-Z4-L01-TC | 2d | 2027-08-28 | 2027-08-30 | RHD4CZ4L01TC2100, RHD4PRSHLDOSTC1000, RHD4PRSHLSTAGTC1000 |  | -161.02d |
| RHD4CZ4L01TC2400 |  | Backfilling of HDPE Ducts for Telecom Network - (RD-L-1)-Z4-L01-TC | 2d | 2027-08-30 | 2027-09-01 | RHD4CZ4L01TC2200 |  | -161.02d |
|  | 8436 | **RHD4-02-002-L01-(TC)-Telecommunications Manholes** |  |  |  |  |  |  |
|  | 8437 | **RHD4-02-002-L01-(TC)-Telecomminications Road Crossings** |  |  |  |  |  |  |
|  | 8438 | **RHD4-02-002-Z4-L01-Information and Communication Technologies - ICT** |  | 2027-08-28 | 2027-09-04 |  |  |  |
|  | 8439 | **RHD4-02-002-L01-(ICT)-Information and Communication Technologies Ducts** |  | 2027-08-28 | 2027-09-04 |  |  |  |
| RHD4CZ4L01ICT2100 |  | Excavation of HDPE Ducts for ICT Network - (RD-L-1)-Z4-L01-ICT | 2d | 2027-08-28 | 2027-08-30 | RHD4ENSDZ8APPICT200, RHD4CZ4L01TC2100 |  | -163.02d |
| RHD4CZ4L01ICT2200 |  | Installation of HDPE Ducts for ICT Network - (RD-L-1)-Z4-L01-ICT | 2d | 2027-08-30 | 2027-09-01 | RHD4CZ4L01ICT2100, RHD4PRSHLDOSICT1000, RHD4PRSHLSTAGICT1000 |  | -163.02d |
| RHD4CZ4L01ICT2400 |  | Backfilling of HDPE Ducts for ICT Network - (RD-L-1)-Z4-L01-ICT | 2d | 2027-09-01 | 2027-09-04 | RHD4CZ4L01ICT2200 |  | -163.02d |
|  | 8440 | **RHD4-02-002-L01-(ICT)-Information and Communication Technologies Manholes** |  |  |  |  |  |  |
|  | 8441 | **RHD4-02-002-L01-(ICT)-Information and Communication Technologies Road Crossings** |  |  |  |  |  |  |
|  | 8429 | **RHD4-02-002-Z4-L01-Landscape Network - LS** |  |  |  |  |  |  |
|  | 8430 | **RHD4-02-002-L01-(LS)-Landscape Lighting cables** |  |  |  |  |  |  |
|  | 8432 | **RHD4-02-002-L01-(LS)-Landscape Bollard Poles** |  |  |  |  |  |  |
|  | 8442 | **RHD4-02-002-Z4-L01-Security Network - CCTV** |  | 2027-09-04 | 2027-10-17 |  |  |  |
|  | 8443 | **RHD4-02-002-L01-(CCTV)-Civil Works** |  | 2027-09-04 | 2027-09-15 |  |  |  |
| RHD4CZ4L01CCTV2100 |  | Civil Works for Security Network - (RD-L-1)-Z4-L01-CCTV | 10d | 2027-09-04 | 2027-09-15 | RHD4CZ4L01ICT2400, RHD4CZ4L01TC2400 |  | -163.02d |
|  | 2959 | **RHD4-02-002-L01-(CCTV)-CCTV Poles** |  | 2027-09-15 | 2027-09-28 |  |  |  |
| RHD4CZ4L01CCTV1100 |  | Excavation for RC Base for CCTV Poles for Security Network - (RD-L-1)-Z4-L01-CCTV | 2d | 2027-09-15 | 2027-09-18 | RHD4CZ4L01CCTV2100 |  | -140.06d |
| RHD4CZ4L01CCTV1200 |  | Installation for RC Base for CCTV Poles for Security Network - (RD-L-1)-Z4-L01-CCTV | 2d | 2027-09-18 | 2027-09-20 | RHD4CZ4L01CCTV1100 |  | -140.06d |
| RHD4CZ4L01CCTV1300 |  | Backfill for RC Base for CCTV Poles for Security Network - (RD-L-1)-Z4-L01-CCTV | 2.03d | 2027-09-20 | 2027-09-22 | RHD4CZ4L01CCTV1200 |  | -140.06d |
| RHD4CZ4L01CCTV1400 |  | Installation for CCTV Poles for Security Network - (RD-L-1)-Z4-L01-CCTV | 2d | 2027-09-22 | 2027-09-26 | RHD4CZ4L01CCTV1300 |  | -140.06d |
| RHD4CZ4L01CCTV1500 |  | Protection post Installation for CCTV Poles for Security Network - (RD-L-1)-Z4-L01-CCTV | 2d | 2027-09-26 | 2027-09-28 | RHD4CZ4L01SL1500, RHD4CZ4L01CCTV1400 |  | -138.06d |
|  | 2960 | **RHD4-02-002-L01-(CCTV)-Camera** |  | 2027-09-28 | 2027-09-30 |  |  |  |
| RHD4CZ4L01CCTV3100 |  | Installation for Cameras for Security Network - (RD-L-1)-Z4-L01-CCTV | 2d | 2027-09-28 | 2027-09-30 | RHD4CZ4L01CCTV1400, RHD4CZ4L01CCTV4100 |  | -140.06d |
|  | 2961 | **RHD4-02-002-L01-(CCTV)-Power and Infrastructure** |  | 2027-09-26 | 2027-09-30 |  |  |  |
| RHD4CZ4L01CCTV4100 |  | Installation of Power outlet, UPS and midspan for PTZ Camerafor Cameras for Security Network - (RD-L-1)-Z4-L01-CCTV | 2.01d | 2027-09-26 | 2027-09-28 | RHD4CZ4L01CCTV1400 |  | -140.06d |
| RHD4CZ4L01CCTV4200 |  | Short Range Wireless PoP wireless Bridgefor CCTV Poles for Security Network - (RD-L-1)-Z4-L01-CCTV | 2d | 2027-09-28 | 2027-09-30 | RHD4CZ4L01CCTV4100 |  | -140.06d |
|  | 2963 | **RHD4-02-002-L01-(CCTV)-CCTV Panels and Components** |  | 2027-09-30 | 2027-10-17 |  |  |  |
| RHD4CZ4L01CCTV6100 |  | Installation for CCTV Panels for Security Network - (RD-L-1)-Z4-L01-CCTV | 14d | 2027-09-30 | 2027-10-17 | RHD4CZ4L01CCTV4200, RHD4CZ4L01CCTV3100, RHD4CZ4L01CCTV1500 |  | -140.06d |
|  | 2974 | **RHD4-02-002-Z4-A013** |  | 2026-06-30 | 2028-02-03 |  |  |  |
|  | 3005 | **RHD4-02-002-Z4-A013-Crossings Sewage Network - SWCr** |  |  |  |  |  |  |
|  | 3015 | **RHD4-02-002-A013-(SWCr)-MH Works - 1200 mm diameter** |  |  |  |  |  |  |
|  | 3009 | **RHD4-02-002-A013-(SWCr)-GRP Pipes - 600 mm diameter** |  |  |  |  |  |  |
|  | 3021 | **RHD4-02-002-A013-(SWCr)-Air Valve Chambers** |  |  |  |  |  |  |
|  | 3022 | **RHD4-02-002-A013-(SWCr)-Air Valves** |  |  |  |  |  |  |
|  | 3025 | **RHD4-02-002-A013-(SWCr)-Discharge Chambers** |  |  |  |  |  |  |
|  | 3049 | **RHD4-02-002-Z4-A013-Crossings Potable Network - PTCr** |  |  |  |  |  |  |
|  | 3053 | **RHD4-02-002-A013-(PTCr)-HDPE Pipes - 400 mm diameter** |  |  |  |  |  |  |
|  | 3056 | **RHD4-02-002-A013-(PTCr)-Butterfly Valve Chamber** |  |  |  |  |  |  |
|  | 3057 | **RHD4-02-002-A013-(PTCr)-Butterfly Valves** |  |  |  |  |  |  |
|  | 3060 | **RHD4-02-002-A013-(PTCr)-Air Valve Chambers** |  |  |  |  |  |  |
|  | 3061 | **RHD4-02-002-A013-(PTCr)-Air Valves** |  |  |  |  |  |  |
|  | 3062 | **RHD4-02-002-A013-(PTCr)-Fire Hydrant** |  |  |  |  |  |  |
|  | 3096 | **RHD4-02-002-Z4-A013-Crossings Irrigation Network - IRRC** |  |  |  |  |  |  |
|  | 3097 | **RHD4-02-002-A013-(IRRC)-HDPE Pipes - 160 mm diameter** |  |  |  |  |  |  |
|  | 3100 | **RHD4-02-002-A013-(IRRC)-HDPE Pipes - 250 mm diameter** |  |  |  |  |  |  |
|  | 3105 | **RHD4-02-002-A013-(IRRC)-Gate Valves (Direct Buried)** |  |  |  |  |  |  |
|  | 3110 | **RHD4-02-002-A013-(IRRC)-Air Valve Chamber** |  |  |  |  |  |  |
|  | 3111 | **RHD4-02-002-A013-(IRRC)-Air Valves** |  |  |  |  |  |  |
|  | 3153 | **RHD4-02-002-Z4-A013-Road Works - RD** |  | 2026-06-30 | 2028-02-03 |  |  |  |
|  | 3154 | **RHD4-02-002-A013-(RD)-Subgrade** |  | 2026-06-30 | 2026-07-09 |  |  |  |
| RHD4CZ4A013RD1100 |  | Supply, lay and compaction subgrade compacted thickness 300 mm for Roads - (RD-A-1 /3)-Z4-A013-RD | 5d | 2026-06-30 A | 2026-07-09 A | RHD4ENSDZ4APPRD220, RHD4ENSDZ4APPEW100 SS, RHD4CZ4A013ST3300 | 100% |  |
|  | 3155 | **RHD4-02-002-A013-(RD)-Aggregate Base Course** |  | 2026-09-30 | 2026-10-27 |  |  |  |
| RHD4CZ4A013RD2100 |  | Supply, lay and compaction Aggregate base course compacted thickness 300 mmfor Roads - (RD-A-1 /3)-Z4-A013-RD | 5d | 2026-09-30 A | 2026-10-27 A | RHD4PRSHLDOSRD1000, RHD4PRSHLSTAGRD1000, RHD4CZ4A013RD1100 | 100% |  |

| ID | WBS | Task | Duration | Start | Finish | Predecessors | Complete | Total float |
| --- | --- | --- | --- | --- | --- | --- | --- | --- |
|  | 3156 | **RHD4-02-002-A013-(RD)-Bituminous base course Two Layers, including (MC1)&(RC2)** |  | 2026-10-14 | 2027-08-10 |  |  |  |
| RHD4CZ4A013RD3100 |  | Supply, lay and Asphaltic base course including Prime Coat (MC1) for 1st Layer - (RD-A-1 /3)-Z4-A013-RD | 10d | 2026-10-14 A | 2027-02-18 | RHD4CZ4A013RD2100, RHD4PRSHLDOSRD1100, RHD4ENMSASPH2000, RHD4ENMSASPH2010, RHD4PRSHLSTAGRD1100 | 82% | -147.02d |
| RHD4CZ4A013RD3200 |  | Supply, lay and Asphaltic base course including Tack Coat (RC2) for 2nd Layer - (RD-A-1 /3)-Z4-A013-RD | 10d | 2027-07-29 | 2027-08-10 | RHD4CZ4A013RD3100, RHD4PRSHLDOSRD1100, RHD4PRSHLSTAGRD1100, RHD4CZ4A013ICT2400 |  | -122.02d |
|  | 3158 | **RHD4-02-002-A013-(RD)-Precast Concrete Curb** |  | 2027-08-10 | 2027-08-19 |  |  |  |
| RHD4CZ4A013RD5100 |  | Supply and installation Precast Concrete Kerb for Roads - (RD-A-1 /3)-Z4-A013-RD | 8d | 2027-08-10 | 2027-08-19 | RHD4CZ4A013RD3200, RHD4PRSHLDOSRD1200, RHD4ENMSRD2000, RHD4ENMSRD2010, RHD4PRSHLSTAGRD1200 |  | -122.02d |
|  | 3161 | **RHD4-02-002-A013-(RD)-Traffic Signage** |  | 2027-10-02 | 2027-10-12 |  |  |  |
| RHD4CZ4A013RD8100 |  | Installation of Traffic Signage for Road Network - (RD-A-1 /3)-Z4-A013-RD | 9d | 2027-10-02 | 2027-10-12 | RHD4CZ4A013RD5100, RHD4PRSHLDOSRD1600, RHD4PRSHLSTAGRD1600, RHD4CZ4L01RD8100 |  | -158.02d |
|  | 3159 | **RHD4-02-002-A013-(RD)-Precast Interlocking Block Pavers** |  |  |  |  |  |  |
|  | 3157 | **RHD4-02-002-A013-(RD)-Bituminous concrete wearing course including tack coat (RC2)** |  | 2027-08-19 | 2027-08-24 |  |  |  |
| RHD4CZ4A013RD4100 |  | Supply, lay and compaction Asphaltic wearing course including tack Coat (RC2)for Road Network - (RD-A-1 /3)-Z4-A013-RD | 4d | 2027-08-19 | 2027-08-24 | RHD4CZ4A013RD5100 |  | -121.02d |
|  | 3162 | **RHD4-02-002-A013-(RD)-Speed Table and Wheel Stopper** |  |  |  |  |  |  |
|  | 3160 | **RHD4-02-002-A013-(RD)-Pavement Marking** |  | 2028-01-31 | 2028-02-03 |  |  |  |
| RHD4CZ4A013RD7100 |  | Pavement Markings for Road Network - (RD-A-1 /3)-Z4-A013-RD | 3d | 2028-01-31 | 2028-02-03 | RHD4CZ4A013RD4100, RHD4PRSHLDOSRD1500, RHD4PRSHLSTAGRD1500, RHD4CZ6C062RD7100 |  | -156.02d |
|  | 2978 | **RHD4-02-002-Z4-A013-Storm Network - ST** |  | 2026-08-04 | 2027-03-25 |  |  |  |
|  | 2428 | **RHD4-02-002-A013-(ST)-MH Works - 1200 mm diameter** |  | 2026-08-04 | 2027-02-18 |  |  |  |
| RHD4CZ4A013ST3100 |  | Excavation and PC Blinding works for MH 1200 mm - (RD-A-1 /3)-Z4-A013-ST | 2d | 2026-08-04 A | 2027-02-09 | RHD4CZ5L016ST1508 | 64% | -197.02d |
| RHD4CZ4A013ST3200 |  | Installation of Base for MH 1200 mm - (RD-A-1 /3)-Z4-A013-ST | 2d | 2026-09-05 A | 2027-02-11 | RHD4CZ4A013ST3100 | 64% | -157.02d |
| RHD4CZ4A013ST3300 |  | MH Ring and C.Slab works and Backfilling works for MH 1200 mm - (RD-A-1 /3)-Z4-A013-ST | 2d | 2026-09-07 A | 2027-02-14 | RHD4CZ4A013ST3200 | 64% | -157.02d |
| RHD4CZ4A013ST3400 |  | Steel Cover for MH 1200 mm - (RD-A-1 /3)-Z4-A013-ST | 2d | 2027-02-14 | 2027-02-16 | RHD4CZ4A013ST3300 |  | -142.02d |
| RHD4CZ4A013ST3500 |  | Finishing, Benching, Testing works for MH 1200 mm - (RD-A-1 /3)-Z4-A013-ST | 2d | 2027-02-16 | 2027-02-18 | RHD4CZ4A013ST3400 |  | -142.02d |
|  | 2416 | **RHD4-02-002-A013-(ST)-GRP Pipes - 800 mm diameter** |  | 2026-08-26 | 2027-02-16 |  |  |  |
| RHD4CZ4A013ST1104 |  | Excavation works for GRP Pipe Line 800 mm - (RD-A-1 /3)-Z4-A013-ST | 3d | 2026-08-26 A | 2026-08-29 A | RHD4CZ4A013ST3100 | 100% |  |
| RHD4CZ4A013ST1204 |  | Bedding works for GRP Pipe Line 800 mm - (RD-A-1 /3)-Z4-A013-ST | 3d | 2026-08-30 A | 2026-09-01 A | RHD4CZ4A013ST1104 | 100% |  |
| RHD4CZ4A013ST1304 |  | Installing for GRP Pipe Line 800 mm - (RD-A-1 /3)-Z4-A013-ST | 2d | 2026-09-01 A | 2026-09-06 A | RHD4CZ4A013ST1204 | 100% |  |
| RHD4CZ4A013ST1504 |  | Backfilling and warning tape works for GRP Pipe Line 800 mm - (RD-A-1 /3)-Z4-A013-ST | 3d | 2026-09-02 A | 2026-09-08 A | RHD4CZ4A013ST1404 | 100% |  |
| RHD4CZ4A013ST1404 |  | Primary Test for GRP Pipe Line 800 mm - (RD-A-1 /3)-Z4-A013-ST | 2d | 2027-02-14 | 2027-02-16 | RHD4CZ4A013ST3300, RHD4CZ4A013ST1304 |  | -150.02d |
|  | 2414 | **RHD4-02-002-A013-(ST)-GRP Pipes - 600 mm diameter** |  | 2026-08-18 | 2027-02-11 |  |  |  |
| RHD4CZ4A013ST1102 |  | Excavation works for GRP Pipe Line 600 mm - (RD-A-1 /3)-Z4-A013-ST | 2d | 2026-08-18 A | 2026-08-19 A | RHD4CZ4A013ST1104 | 100% |  |
| RHD4CZ4A013ST1202 |  | Bedding works for GRP Pipe Line 600 mm - (RD-A-1 /3)-Z4-A013-ST | 2d | 2026-09-05 A | 2026-09-06 A | RHD4CZ4A013ST1102 | 100% |  |
| RHD4CZ4A013ST1302 |  | Installing for GRP Pipe Line 600 mm - (RD-A-1 /3)-Z4-A013-ST | 2d | 2026-09-06 A | 2026-09-07 A | RHD4CZ4A013ST1202 | 100% |  |
| RHD4CZ4A013ST1502 |  | Backfilling and warning tape works for GRP Pipe Line 600 mm - (RD-A-1 /3)-Z4-A013-ST | 2d | 2026-09-08 A | 2026-09-09 A | RHD4CZ4A013ST1402 | 100% |  |
| RHD4CZ4A013ST1402 |  | Primary Test for GRP Pipe Line 600 mm - (RD-A-1 /3)-Z4-A013-ST | 2d | 2027-02-09 | 2027-02-11 | RHD4CZ4A013ST1302 |  | -146.02d |
|  | 2412 | **RHD4-02-002-A013-(ST)-GRP Pipes - 400 mm diameter** |  | 2026-08-19 | 2027-02-11 |  |  |  |
| RHD4CZ4A013ST1100 |  | Excavation works for GRP Pipe Line 400 mm - (RD-A-1 /3)-Z4-A013-ST | 2d | 2026-08-19 A | 2026-08-20 A | RHD4CZ4A013ST1102 | 100% |  |
| RHD4CZ4A013ST1200 |  | Bedding works for GRP Pipe Line 400 mm - (RD-A-1 /3)-Z4-A013-ST | 2d | 2026-09-05 A | 2026-10-23 A | RHD4CZ4A013ST1100 | 100% |  |
| RHD4CZ4A013ST1300 |  | Installing for GRP Pipe Line 400 mm - (RD-A-1 /3)-Z4-A013-ST | 2d | 2026-09-07 A | 2026-10-24 A | RHD4CZ4A013ST1200 | 100% |  |
| RHD4CZ4A013ST1500 |  | Backfilling and warning tape works for GRP Pipe Line 400 mm - (RD-A-1 /3)-Z4-A013-ST | 2d | 2026-09-08 A | 2026-10-25 A | RHD4CZ4A013ST1504, RHD4CZ4A013ST1502, RHD4CZ4A013ST1400 | 100% |  |
| RHD4CZ4A013ST1400 |  | Primary Test for GRP Pipe Line 400 mm - (RD-A-1 /3)-Z4-A013-ST | 2d | 2027-02-09 | 2027-02-11 | RHD4CZ4A013ST1300 |  | -146.02d |
|  | 2413 | **RHD4-02-002-A013-(ST)-GRP Pipes - 500 mm diameter** |  | 2026-08-08 | 2027-02-11 |  |  |  |
| RHD4CZ4A013ST1101 |  | Excavation works for GRP Pipe Line 500 mm - (RD-A-1 /3)-Z4-A013-ST | 2d | 2026-08-08 A | 2026-08-09 A | RHD4CZ4A013ST1100 | 100% |  |
| RHD4CZ4A013ST1201 |  | Bedding works for GRP Pipe Line 500 mm - (RD-A-1 /3)-Z4-A013-ST | 2d | 2026-08-10 A | 2026-08-11 A | RHD4CZ4A013ST1101 | 100% |  |
| RHD4CZ4A013ST1301 |  | Installing for GRP Pipe Line 500 mm - (RD-A-1 /3)-Z4-A013-ST | 2d | 2026-08-13 A | 2026-08-15 A | RHD4CZ4A013ST1201 | 100% |  |
| RHD4CZ4A013ST1501 |  | Backfilling and warning tape works for GRP Pipe Line 500 mm - (RD-A-1 /3)-Z4-A013-ST | 2d | 2026-08-17 A | 2026-08-18 A | RHD4CZ4A013ST1500, RHD4CZ4A013ST1401 | 100% |  |
| RHD4CZ4A013ST1401 |  | Primary Test for GRP Pipe Line 500 mm - (RD-A-1 /3)-Z4-A013-ST | 2d | 2027-02-09 | 2027-02-11 | RHD4CZ4A013ST1301 |  | -146.02d |
|  | 2997 | **RHD4-02-002-A013-(ST)-MH Works - 2000 mm diameter** |  | 2026-08-06 | 2027-03-02 |  |  |  |
| RHD4CZ4A013ST3102 |  | Excavation and PC Blinding works for MH 2000 mm - (RD-A-1 /3)-Z4-A013-ST | 6d | 2026-08-06 A | 2026-09-04 A | RHD4ENSDZ4APPST110, RHD4ENMSST2000, RHD4CZ4A013ST1101 | 100% |  |
| RHD4CZ4A013ST3202 |  | Installation of Base for MH 2000 mm - (RD-A-1 /3)-Z4-A013-ST | 3d | 2026-09-19 A | 2026-10-24 A | RHD4CZ4A013ST3102, RHD4PRSHLSTAGST1603 | 100% |  |
| RHD4CZ4A013ST3302 |  | MH Ring and C.Slab works and Backfilling works for MH 2000 mm - (RD-A-1 /3)-Z4-A013-ST | 8d | 2026-10-05 A | 2026-10-25 A | RHD4CZ4A013ST3202, RHD4PRSHLDOSST1603, RHD4CZ4A013ST1501 | 100% |  |
| RHD4CZ4A013ST3402 |  | Steel Cover for MH 2000 mm - (RD-A-1 /3)-Z4-A013-ST | 5d | 2027-02-16 | 2027-02-23 | RHD4CZ4A013ST3302, RHD4PRSHLDOSST1703, RHD4PRSHLSTAGST1703 |  | -150.02d |
| RHD4CZ4A013ST3502 |  | Finishing, Benching, Testing works for MH 2000 mm - (RD-A-1 /3)-Z4-A013-ST | 6d | 2027-02-23 | 2027-03-02 | RHD4CZ4A013ST3402, RHD4CZ4A013RD3100 |  | -150.02d |
|  | 2996 | **RHD4-02-002-A013-(ST)-MH Works - 1500 mm diameter** |  | 2026-09-05 | 2027-03-16 |  |  |  |
| RHD4CZ4A013ST3101 |  | Excavation and PC Blinding works for MH 1500 mm - (RD-A-1 /3)-Z4-A013-ST | 3d | 2026-09-05 A | 2026-09-19 A | RHD4CZ4A013ST3102, RHD4ENSDZ4APPST110, RHD4ENMSST2000, RHD4CZ4A013ST3502 | 100% |  |
| RHD4CZ4A013ST3201 |  | Installation of Base for MH 1500 mm - (RD-A-1 /3)-Z4-A013-ST | 6d | 2026-09-06 A | 2026-09-22 A | RHD4CZ4A013ST3101, RHD4CZ4A013ST3202, RHD4PRSHLSTAGST1603 | 100% |  |
| RHD4CZ4A013ST3301 |  | MH Ring and C.Slab works and Backfilling works for MH 1500 mm - (RD-A-1 /3)-Z4-A013-ST | 6d | 2026-10-01 A | 2026-10-24 A | RHD4CZ4A013ST3201, RHD4CZ4A013ST3302, RHD4PRSHLDOSST1603 | 100% |  |
| RHD4CZ4A013ST3401 |  | Steel Cover for MH 1500 mm - (RD-A-1 /3)-Z4-A013-ST | 3d | 2027-03-02 | 2027-03-06 | RHD4CZ4A013ST3301, RHD4PRSHLDOSST1703, RHD4PRSHLSTAGST1703 |  | -113.02d |
| RHD4CZ4A013ST3501 |  | Finishing, Benching, Testing works for MH 1500 mm - (RD-A-1 /3)-Z4-A013-ST | 6d | 2027-03-06 | 2027-03-16 | RHD4CZ4A013ST3401, RHD4CZ4A013ST3502 |  | -113.02d |
|  | 2990 | **RHD4-02-002-A013-(ST)-GRP Pipes - 1500 mm diameter** |  |  |  |  |  |  |
|  | 2987 | **RHD4-02-002-A013-(ST)-GRP Pipes - 1200 mm diameter** |  | 2026-08-04 | 2027-03-06 |  |  |  |
| RHD4CZ4A013ST1108 |  | Excavation works for GRP Pipe Line 1200 mm - (RD-A-1 /3)-Z4-A013-ST | 4d | 2026-08-04 A | 2026-09-05 A | RHD4ENSDZ4APPST110, RHD4PRSHLSTAGST1003, RHD4CZ4A013ST3301 | 100% |  |
| RHD4CZ4A013ST1208 |  | Bedding works for GRP Pipe Line 1200 mm - (RD-A-1 /3)-Z4-A013-ST | 4d | 2026-08-09 A | 2026-09-06 A | RHD4CZ4A013ST1108 | 100% |  |
| RHD4CZ4A013ST1308 |  | Installing for GRP Pipe Line 1200 mm - (RD-A-1 /3)-Z4-A013-ST | 3d | 2026-08-13 A | 2026-09-08 A | RHD4CZ4A013ST1208, RHD4PRSHLSTAGST1003, RHD4PRSHLDOSST1603, RHD4PRSHLPOST1000, RHD4PRSHLDOSST1003 | 100% |  |
| RHD4CZ4A013ST1508 |  | Backfilling and warning tape works for GRP Pipe Line 1200 mm - (RD-A-1 /3)-Z4-A013-ST | 4d | 2026-08-15 A | 2026-10-22 A | RHD4CZ4A013ST1408 | 100% |  |
| RHD4CZ4A013ST1408 |  | Primary Test for GRP Pipe Line 1200 mm - (RD-A-1 /3)-Z4-A013-ST | 3d | 2027-03-02 | 2027-03-06 | RHD4CZ4A013ST1308 |  | -150.02d |
|  | 2986 | **RHD4-02-002-A013-(ST)-GRP Pipes - 1100 mm diameter** |  | 2026-08-11 | 2027-03-08 |  |  |  |
| RHD4CZ4A013ST1107 |  | Excavation works for GRP Pipe Line 1100 mm - (RD-A-1 /3)-Z4-A013-ST | 3d | 2026-08-11 A | 2026-08-13 A | RHD4ENSDZ4APPST110, RHD4CZ4A013ST1508 | 100% |  |
| RHD4CZ4A013ST1207 |  | Bedding works for GRP Pipe Line 1100 mm - (RD-A-1 /3)-Z4-A013-ST | 3d | 2026-08-13 A | 2026-08-16 A | RHD4CZ4A013ST1107 | 100% |  |
| RHD4CZ4A013ST1307 |  | Installing for GRP Pipe Line 1100 mm - (RD-A-1 /3)-Z4-A013-ST | 2d | 2026-08-15 A | 2026-10-22 A | RHD4CZ4A013ST1207, RHD4CZ4A013ST1308, RHD4PRSHLSTAGST1003, RHD4PRSHLDOSST1603, RHD4PRSHLPOST1000, RHD4PRSHLDOSST1003 | 100% |  |
| RHD4CZ4A013ST1507 |  | Backfilling and warning tape works for GRP Pipe Line 1100 mm - (RD-A-1 /3)-Z4-A013-ST | 3d | 2026-10-24 A | 2026-10-26 A | RHD4CZ4A013ST1407, RHD4CZ4A013ST1508 | 100% |  |
| RHD4CZ4A013ST1407 |  | Primary Test for GRP Pipe Line 1100 mm - (RD-A-1 /3)-Z4-A013-ST | 2d | 2027-03-06 | 2027-03-08 | RHD4CZ4A013ST1307, RHD4CZ4A013ST1408 |  | -113.02d |
|  | 2985 | **RHD4-02-002-A013-(ST)-GRP Pipes - 1000 mm diameter** |  | 2026-10-22 | 2027-03-24 |  |  |  |

| ID | WBS | Task | Duration | Start | Finish | Predecessors | Complete | Total float |
| --- | --- | --- | --- | --- | --- | --- | --- | --- |
| RHD4CZ4A013ST1106 |  | Excavation works for GRP Pipe Line 1000 mm - (RD-A-1 /3)-Z4-A013-ST | 3d | 2026-10-22 A | 2027-03-13 | RHD4ENSDZ4APPST110, RHD4CZ4A013ST1107 | 29% | -150.02d |
| RHD4CZ4A013ST1206 |  | Bedding works for GRP Pipe Line 1000 mm - (RD-A-1 /3)-Z4-A013-ST | 3d | 2026-10-24 A | 2027-03-16 | RHD4CZ4A013ST1106 | 29% | -119.02d |
| RHD4CZ4A013ST1306 |  | Installing for GRP Pipe Line 1000 mm - (RD-A-1 /3)-Z4-A013-ST | 2d | 2026-10-25 A | 2027-03-18 | RHD4CZ4A013ST1206, RHD4CZ4A013ST1307, RHD4PRSHLSTAGST1003, RHD4PRSHLDOSST1603, RHD4PRSHLPOST1000, RHD4PRSHLDOSST1003 | 29% | -119.02d |
| RHD4CZ4A013ST1506 |  | Backfilling and warning tape works for GRP Pipe Line 1000 mm - (RD-A-1 /3)-Z4-A013-ST | 3d | 2026-10-27 A | 2027-03-24 | RHD4CZ4A013ST1406, RHD4CZ4A013ST1507 | 29% | -118.02d |
| RHD4CZ4A013ST1406 |  | Primary Test for GRP Pipe Line 1000 mm - (RD-A-1 /3)-Z4-A013-ST | 2d | 2027-03-18 | 2027-03-21 | RHD4CZ4A013ST1306, RHD4CZ4A013ST1407 |  | -119.02d |
|  | 2984 | **RHD4-02-002-A013-(ST)-GRP Pipes - 900 mm diameter** |  | 2026-08-19 | 2027-03-23 |  |  |  |
| RHD4CZ4A013ST1105 |  | Excavation works for GRP Pipe Line 900 mm - (RD-A-1 /3)-Z4-A013-ST | 2d | 2026-08-19 A | 2026-08-20 A | RHD4CZ4A013ST1106, RHD4ENSDZ4APPST110 | 100% |  |
| RHD4CZ4A013ST1205 |  | Bedding works for GRP Pipe Line 900 mm - (RD-A-1 /3)-Z4-A013-ST | 2d | 2026-08-22 A | 2026-08-23 A | RHD4CZ4A013ST1105 | 100% |  |
| RHD4CZ4A013ST1305 |  | Installing for GRP Pipe Line 900 mm - (RD-A-1 /3)-Z4-A013-ST | 2d | 2026-08-24 A | 2026-09-05 A | RHD4CZ4A013ST1205, RHD4CZ4A013ST1306, RHD4PRSHLSTAGST1003, RHD4PRSHLDOSST1603, RHD4PRSHLPOST1000, RHD4PRSHLDOSST1003 | 100% |  |
| RHD4CZ4A013ST1505 |  | Backfilling and warning tape works for GRP Pipe Line 900 mm - (RD-A-1 /3)-Z4-A013-ST | 2d | 2026-08-26 A | 2026-09-07 A | RHD4CZ4A013ST1405, RHD4CZ4A013ST1506 | 100% |  |
| RHD4CZ4A013ST1405 |  | Primary Test for GRP Pipe Line 900 mm - (RD-A-1 /3)-Z4-A013-ST | 2d | 2027-03-21 | 2027-03-23 | RHD4CZ4A013ST1305, RHD4CZ4A013ST1406 |  | -119.02d |
|  | 2982 | **RHD4-02-002-A013-(ST)-GRP Pipes - 700 mm diameter** |  | 2026-08-18 | 2027-03-25 |  |  |  |
| RHD4CZ4A013ST1103 |  | Excavation works for GRP Pipe Line 700 mm - (RD-A-1 /3)-Z4-A013-ST | 2d | 2026-08-18 A | 2026-08-19 A | RHD4CZ4A013ST1105, RHD4ENSDZ4APPST110 | 100% |  |
| RHD4CZ4A013ST1203 |  | Bedding works for GRP Pipe Line 700 mm - (RD-A-1 /3)-Z4-A013-ST | 2d | 2026-08-20 A | 2026-08-22 A | RHD4CZ4A013ST1103 | 100% |  |
| RHD4CZ4A013ST1303 |  | Installing for GRP Pipe Line 700 mm - (RD-A-1 /3)-Z4-A013-ST | 2d | 2026-08-23 A | 2026-08-24 A | RHD4CZ4A013ST1203, RHD4CZ4A013ST1305, RHD4PRSHLSTAGST1003, RHD4PRSHLDOSST1603, RHD4PRSHLPOST1000, RHD4PRSHLDOSST1003 | 100% |  |
| RHD4CZ4A013ST1503 |  | Backfilling and warning tape works for GRP Pipe Line 700 mm - (RD-A-1 /3)-Z4-A013-ST | 2d | 2026-09-05 A | 2026-09-06 A | RHD4CZ4A013ST1403, RHD4CZ4A013ST1505, RHD4CZ4A013ST3500 | 100% |  |
| RHD4CZ4A013ST1403 |  | Primary Test for GRP Pipe Line 700 mm - (RD-A-1 /3)-Z4-A013-ST | 2d | 2027-03-23 | 2027-03-25 | RHD4CZ4A013ST1303, RHD4CZ4A013ST1405 |  | -119.02d |
|  | 2994 | **RHD4-02-002-A013-(ST)-UPVC Pipes - 400 mm diameter** |  |  |  |  |  |  |
|  | 2993 | **RHD4-02-002-A013-(ST)-UPVC Pipes - 300 mm diameter** |  | 2026-08-04 | 2027-03-21 |  |  |  |
| RHD4CZ4A013ST2100 |  | Excavation works for UPVC Pipe Line 300 mm - (RD-A-1 /3)-Z4-A013-ST | 8d | 2026-08-04 A | 2026-09-05 A | RHD4ENSDZ4APPST110, RHD4CZ4A013ST1103 | 100% |  |
| RHD4CZ4A013ST2200 |  | Bedding works for UPVC Pipe Line 300 mm - (RD-A-1 /3)-Z4-A013-ST | 7d | 2026-08-06 A | 2026-09-07 A | RHD4CZ4A013ST2100 | 100% |  |
| RHD4CZ4A013ST2300 |  | Installing for UPVC Pipe Line 300 mm - (RD-A-1 /3)-Z4-A013-ST | 8d | 2026-08-10 A | 2026-10-24 A | RHD4CZ4A013ST2200, RHD4PRSHLDOSST1103, RHD4PRSHLSTAGST1103 | 100% |  |
| RHD4CZ4A013ST2500 |  | Backfilling and warning tape works for UPVC Pipe Line 300 mm - (RD-A-1 /3)-Z4-A013-ST | 9d | 2026-09-19 A | 2026-10-25 A | RHD4CZ4A013ST2400 | 100% |  |
| RHD4CZ4A013ST2400 |  | Primary Test for UPVC Pipe Line 300 mm - (RD-A-1 /3)-Z4-A013-ST | 5d | 2027-03-15 | 2027-03-21 | RHD4CZ4A013ST2300, RHD4CZ4A013ST6100 |  | -88.02d |
|  | 3001 | **RHD4-02-002-A013-(ST)-Concrete Encasement** |  | 2026-09-05 | 2027-03-15 |  |  |  |
| RHD4CZ4A013ST6100 |  | Pipe Encasement for Storm Pipelines - (RD-A-1 /3)-Z4-A013-ST | 2d | 2026-09-05 A | 2027-03-15 | RHD4CZ4A013ST2300 FF, RHD4CZ4A013ST2200 | 50% | -150.02d |
|  | 3002 | **RHD4-02-002-Z4-A013-Catch Basin - ST** |  | 2026-08-04 | 2027-03-21 |  |  |  |
|  | 3003 | **RHD4-02-002-A013-(ST)-Single Catch Basin Works** |  | 2026-08-04 | 2027-03-21 |  |  |  |
| RHD4CZ4A013ST7100 |  | Excavation works for Single Catch Basin - (RD-A-1 /3)-Z4-A013-ST | 7d | 2026-08-04 A | 2026-08-29 A | RHD4ENSDZ4APPST110, RHD4CZ4A013ST3102 | 100% |  |
| RHD4CZ4A013ST7200 |  | PC Blinding, Installation and Pipe connection for Single Catch Basin - (RD-A-1 /3)-Z4-A013-ST | 7d | 2026-08-30 A | 2026-09-05 A | RHD4CZ4A013ST7100 | 100% |  |
| RHD4CZ4A013ST7300 |  | Rings & C.Slab & Final Backfill for Single Catch Basin - (RD-A-1 /3)-Z4-A013-ST | 9d | 2026-09-06 A | 2027-02-20 | RHD4CZ4A013ST7200, RHD4PRSHLDOSST1303, RHD4PRSHLSTAGST1303 | 90% | -135.02d |
| RHD4CZ4A013ST7400 |  | Steel Cover for Single Catch Basin - (RD-A-1 /3)-Z4-A013-ST | 7d | 2027-02-20 | 2027-03-01 | RHD4CZ4A013ST7300, RHD4PRSHLDOSST1703 |  | -135.02d |
| RHD4CZ4A013ST7500 |  | Finishing and Insulation works for Single Catch Basin - (RD-A-1 /3)-Z4-A013-ST | 14d | 2027-03-01 | 2027-03-21 | RHD4CZ4A013ST7400 |  | -135.02d |
|  | 3004 | **RHD4-02-002-A013-(ST)-Double Catch Basin Works** |  | 2026-08-29 | 2027-03-17 |  |  |  |
| RHD4CZ4A013ST8100 |  | Excavation works for Double Catch Basin - (RD-A-1 /3)-Z4-A013-ST | 2d | 2026-08-29 A | 2026-08-30 A | RHD4CZ4A013ST7100 SS, RHD4CZ4A013ST3301, RHD4ENSDZ4APPST110 | 100% |  |
| RHD4CZ4A013ST8200 |  | PC Blinding, Installation and Pipe connection for Double Catch Basin - (RD-A-1 /3)-Z4-A013-ST | 2d | 2026-08-31 A | 2026-09-05 A | RHD4CZ4A013ST8100, RHD4CZ4A013ST7200 SS | 100% |  |
| RHD4CZ4A013ST8300 |  | Rings & C.Slab & Final Backfillfor Double Catch Basin - (RD-A-1 /3)-Z4-A013-ST | 2d | 2026-09-07 A | 2027-03-13 | RHD4CZ4A013ST8200, RHD4CZ4A013ST7300 SS, RHD4PRSHLDOSST1303, RHD4PRSHLSTAGST1303 | 50% | -144.02d |
| RHD4CZ4A013ST8400 |  | Steel Cover for Double Catch Basin - (RD-A-1 /3)-Z4-A013-ST | 2d | 2027-03-13 | 2027-03-15 | RHD4CZ4A013ST8300, RHD4CZ4A013ST7400 SS, RHD4PRSHLDOSST1703 |  | -144.02d |
| RHD4CZ4A013ST8500 |  | Finishing and Insulation works for Double Catch Basin - (RD-A-1 /3)-Z4-A013-ST | 2d | 2027-03-15 | 2027-03-17 | RHD4CZ4A013ST8400, RHD4CZ4A013ST7500 SS |  | -144.02d |
|  | 3027 | **RHD4-02-002-Z4-A013-Sewage Network - SW** |  |  |  |  |  |  |
|  | 3031 | **RHD4-02-002-A013-(SW)-GRP Pipes - 600 mm diameter** |  |  |  |  |  |  |
|  | 3036 | **RHD4-02-002-A013-(SW)-Concrete Encasement** |  |  |  |  |  |  |
|  | 3064 | **RHD4-02-002-Z4-A013-Potable Network - PT** |  | 2027-03-13 | 2027-05-04 |  |  |  |
|  | 3068 | **RHD4-02-002-A013-(PT)-HDPE Pipes - 400 mm diameter** |  | 2027-03-13 | 2027-04-22 |  |  |  |
| RHD4CZ4A013PT1103 |  | Excavation works for HDPE Pipline 400 mm - (RD-A-1 /3)-Z4-A013-PT | 7d | 2027-03-13 | 2027-03-21 | RHD4ENSDZ4APPPT130, RHD4ENMSPT2000, RHD4CZ4A013ST1103 |  | -122.02d |
| RHD4CZ4A013PT1203 |  | Bedding works for HDPE Pipline 400 mm - (RD-A-1 /3)-Z4-A013-PT | 7d | 2027-03-21 | 2027-03-29 | RHD4CZ4A013PT1103 |  | -122.02d |
| RHD4CZ4A013PT1303 |  | Installing for HDPE Pipline 400 mm - (RD-A-1 /3)-Z4-A013-PT | 9d | 2027-03-29 | 2027-04-08 | RHD4CZ4A013PT1203, RHD4PRSHLDOSPT1000, RHD4PRSHLSTAGPT1000 |  | -122.02d |
| RHD4CZ4A013PT1403 |  | Primary Test for HDPE Pipline 400 mm - (RD-A-1 /3)-Z4-A013-PT | 6d | 2027-04-08 | 2027-04-15 | RHD4CZ4A013PT1303 |  | -122.02d |
| RHD4CZ4A013PT1503 |  | Backfilling and warning tape works for HDPE Pipline 400 mm - (RD-A-1 /3)-Z4-A013-PT | 6d | 2027-04-15 | 2027-04-22 | RHD4CZ4A013PT1403 |  | -122.02d |
|  | 3071 | **RHD4-02-002-A013-(PT)-Butterfly Valve Chamber** |  | 2027-03-21 | 2027-04-25 |  |  |  |
| RHD4CZ4A013PT2100 |  | Excavation and Bedding for Butterfly Valve Chamber for Potable Water Network - (RD-A-1 /3)-Z4-A013-PT | 2d | 2027-03-21 | 2027-03-23 | RHD4ENSDZ4APPPT130, RHD4CZ4A013PT1103 |  | -100.02d |
| RHD4CZ4A013PT2200 |  | PC works for Butterfly Valve Chamber for Potable Water Network - (RD-A-1 /3)-Z4-A013-PT | 2d | 2027-03-23 | 2027-03-25 | RHD4CZ4A013PT2100 |  | -100.02d |
| RHD4CZ4A013PT2300 |  | Installation for Butterfly Valve Chamber for Potable Water Network - (RD-A-1 /3)-Z4-A013-PT | 2d | 2027-03-25 | 2027-03-28 | RHD4CZ4A013PT2200, RHD4PRSHLDOSPT1100, RHD4PRSHLDOSPT1400, RHD4PRSHLSTAGPT1100, RHD4PRSHLSTAGPT1400 |  | -100.02d |
| RHD4CZ4A013PT2400 |  | Backfilling works for Butterfly Valve Chamber for Potable Water Network - (RD-A-1 /3)-Z4-A013-PT | 2d | 2027-04-22 | 2027-04-25 | RHD4CZ4A013PT2300, RHD4CZ4A013PT1503 |  | -122.02d |
|  | 3072 | **RHD4-02-002-A013-(PT)-Butterfly Valves** |  | 2027-03-28 | 2027-04-27 |  |  |  |
| RHD4CZ4A013PT3101 |  | Installation for Butterfly Valves for Potable Water Network - (RD-A-1 /3)-Z4-A013-PT | 2d | 2027-03-28 | 2027-03-30 | RHD4CZ4A013PT2300, RHD4PRSHLDOSPT1200, RHD4PRSHLSTAGPT1200 |  | -100.02d |
| RHD4CZ4A013PT3201 |  | Stem and Service box for Butterfly Valves for Potable Water Network - (RD-A-1 /3)-Z4-A013-PT | 2d | 2027-04-25 | 2027-04-27 | RHD4CZ4A013PT3101, RHD4CZ4A013PT2400, RHD4PRSHLDOSPT1300, RHD4PRSHLSTAGPT1300 |  | -122.02d |
|  | 3073 | **RHD4-02-002-A013-(PT)-Wash out Valve Chambers** |  | 2027-03-21 | 2027-03-30 |  |  |  |
| RHD4CZ4A013PT2101 |  | Excavation and Bedding for Wash out Valve Chambers for Potable Water Network - (RD-A-1 /3)-Z4-A013-PT | 2d | 2027-03-21 | 2027-03-23 | RHD4ENSDZ4APPPT130, RHD4CZ4A013PT1103 |  | -100.02d |
| RHD4CZ4A013PT2201 |  | PC works for Wash out Valve Chambers for Potable Water Network - (RD-A-1 /3)-Z4-A013-PT | 2d | 2027-03-23 | 2027-03-25 | RHD4CZ4A013PT2101 |  | -100.02d |
| RHD4CZ4A013PT2301 |  | Installation for Wash out Valve Chambers for Potable Water Network - (RD-A-1 /3)-Z4-A013-PT | 2d | 2027-03-25 | 2027-03-28 | RHD4CZ4A013PT2201, RHD4PRSHLDOSPT1100, RHD4PRSHLDOSPT1400, RHD4PRSHLSTAGPT1100, RHD4PRSHLSTAGPT1400 |  | -100.02d |
| RHD4CZ4A013PT2401 |  | Backfilling works for Wash out Valve Chambers for Potable Water Network - (RD-A-1 /3)-Z4-A013-PT | 2d | 2027-03-28 | 2027-03-30 | RHD4CZ4A013PT2301 |  | -100.02d |
|  | 3074 | **RHD4-02-002-A013-(PT)-Wash out Valves** |  | 2027-03-28 | 2027-04-01 |  |  |  |
| RHD4CZ4A013PT3102 |  | Installation for Wash out Valves for Potable Water Network - (RD-A-1 /3)-Z4-A013-PT | 2d | 2027-03-28 | 2027-03-30 | RHD4CZ4A013PT2301, RHD4PRSHLDOSPT1200, RHD4PRSHLSTAGPT1200 |  | -100.02d |
| RHD4CZ4A013PT3202 |  | Stem and Service box for Wash out Valves for Potable Water Network - (RD-A-1 /3)-Z4-A013-PT | 2d | 2027-03-30 | 2027-04-01 | RHD4CZ4A013PT3102, RHD4CZ4A013PT2401, RHD4PRSHLDOSPT1300, RHD4PRSHLSTAGPT1300 |  | -100.02d |
|  | 3075 | **RHD4-02-002-A013-(PT)-Air Valve Chambers** |  | 2027-03-21 | 2027-03-30 |  |  |  |
| RHD4CZ4A013PT2102 |  | Excavation and Bedding for Air Valve Chambers for Potable Water Network - (RD-A-1 /3)-Z4-A013-PT | 2d | 2027-03-21 | 2027-03-23 | RHD4ENSDZ4APPPT130, RHD4CZ4A013PT1103 |  | -100.02d |
| RHD4CZ4A013PT2202 |  | PC works for Air Valve Chambers for Potable Water Network - (RD-A-1 /3)-Z4-A013-PT | 2d | 2027-03-23 | 2027-03-25 | RHD4CZ4A013PT2102 |  | -100.02d |
| RHD4CZ4A013PT2302 |  | Installation for Air Valve Chambers for Potable Water Network - (RD-A-1 /3)-Z4-A013-PT | 2d | 2027-03-25 | 2027-03-28 | RHD4CZ4A013PT2202, RHD4PRSHLDOSPT1100, RHD4PRSHLDOSPT1400, RHD4PRSHLSTAGPT1100, RHD4PRSHLSTAGPT1400 |  | -100.02d |
| RHD4CZ4A013PT2402 |  | Backfilling works for Air Valve Chambers for Potable Water Network - (RD-A-1 /3)-Z4-A013-PT | 2d | 2027-03-28 | 2027-03-30 | RHD4CZ4A013PT2302 |  | -100.02d |

| ID | WBS | Task | Duration | Start | Finish | Predecessors | Total float |
| --- | --- | --- | --- | --- | --- | --- | --- |
|  | 3076 | **RHD4-02-002-A013-(PT)-Air Valves** |  | 2027-03-28 | 2027-04-01 |  |  |
| RHD4CZ4A013PT3103 |  | Installation for Air Valves for Potable Water Network - (RD-A-1 /3)-Z4-A013-PT | 2d | 2027-03-28 | 2027-03-30 | RHD4CZ4A013PT2302, RHD4PRSHLDOSPT1200, RHD4PRSHLSTAGPT1200 | -100.02d |
| RHD4CZ4A013PT3203 |  | Stem and Service box for Air Valves for Potable Water Network - (RD-A-1 /3)-Z4-A013-PT | 2d | 2027-03-30 | 2027-04-01 | RHD4CZ4A013PT3103, RHD4CZ4A013PT2402, RHD4PRSHLDOSPT1300, RHD4PRSHLSTAGPT1300 | -100.02d |
|  | 3077 | **RHD4-02-002-A013-(PT)-Fire Hydrant** |  | 2027-04-15 | 2027-05-04 |  |  |
| RHD4CZ4A013PT4100 |  | Excavation and Bedding and Pipe Installation for Fire Hydrant - (RD-A-1 /3)-Z4-A013-PT | 5d | 2027-04-15 | 2027-04-21 | RHD4CZ4A013PT1503 SS, RHD4ENSDZ4APPPT130 | -119.02d |
| RHD4CZ4A013PT4200 |  | Valve Installation for Fire Hydrant - (RD-A-1 /3)-Z4-A013-PT | 3d | 2027-04-21 | 2027-04-25 | RHD4CZ4A013PT4100 | -119.02d |
| RHD4CZ4A013PT4300 |  | Stem for Fire Hydrant - (RD-A-1 /3)-Z4-A013-PT | 3d | 2027-04-25 | 2027-04-28 | RHD4CZ4A013PT4200 | -119.02d |
| RHD4CZ4A013PT4400 |  | Fire Installation for Fire Hydrant - (RD-A-1 /3)-Z4-A013-PT | 3d | 2027-04-28 | 2027-05-02 | RHD4CZ4A013PT4300, RHD4PRSHLDOSPT1500, RHD4PRSHLSTAGPT1500 | -119.02d |
| RHD4CZ4A013PT4500 |  | Protection Barriers for Fire Hydrant - (RD-A-1 /3)-Z4-A013-PT | 2d | 2027-05-02 | 2027-05-04 | RHD4CZ4A013PT4400 | -119.02d |
|  | 3078 | **RHD4-02-002-A013-(PT)-Concrete Encasement** |  |  |  |  |  |
|  | 3079 | **RHD4-02-002-Z4-A013-Irrigation Network - IRR** |  | 2027-03-21 | 2027-05-26 |  |  |
|  | 3083 | **RHD4-02-002-A013-(IRR)-HDPE Pipes - 250 mm diameter** |  | 2027-03-21 | 2027-05-05 |  |  |
| RHD4CZ4A013IRR1103 |  | Excavation works for HDPE Pipline 250 mm - (RD-A-1 /3)-Z4-A013-IRR | 10d | 2027-03-21 | 2027-04-01 | RHD4CZ4A013PT1103, RHD4ENSDZ4APPIRR140, RHD4ENMSRR2000 | -122.02d |
| RHD4CZ4A013IRR1203 |  | Bedding works for HDPE Pipline 250 mm - (RD-A-1 /3)-Z4-A013-IRR | 8d | 2027-04-01 | 2027-04-11 | RHD4CZ4A013IRR1103 | -122.02d |
| RHD4CZ4A013IRR1303 |  | Installing for HDPE Pipline 250 mm - (RD-A-1 /3)-Z4-A013-IRR | 10d | 2027-04-11 | 2027-04-22 | RHD4CZ4A013IRR1203, RHD4PRSHLDOSIRR1000, RHD4PRSHLSTAGIRR1000 | -122.02d |
| RHD4CZ4A013IRR1403 |  | Primary Test for HDPE Pipline 250 mm - (RD-A-1 /3)-Z4-A013-IRR | 3d | 2027-04-22 | 2027-04-26 | RHD4CZ4A013IRR1303 | -122.02d |
| RHD4CZ4A013IRR1503 |  | Backfilling and warning tape works for HDPE Pipline 250 mm - (RD-A-1 /3)-Z4-A013-IRR | 8d | 2027-04-26 | 2027-05-05 | RHD4CZ4A013IRR1403 | -122.02d |
|  | 3082 | **RHD4-02-002-A013-(IRR)-HDPE Pipes - 200 mm diameter** |  |  |  |  |  |
|  | 1770 | **RHD4-02-002-A013-(IRR)-Air Valves** |  | 2027-04-22 | 2027-04-27 |  |  |
| RHD4CZ4A013IRR3103 |  | Installation for Air Valves for Irrigation Network - (RD-A-1 /3)-Z4-A013-IRR | 2d | 2027-04-22 | 2027-04-25 | RHD4CZ4A013IRR1303, RHD4CZ4A013IRR2302 | -112.02d |
| RHD4CZ4A013IRR3203 |  | Stem and Service box for Air Valves for Irrigation Network - (RD-A-1 /3)-Z4-A013-IRR | 2d | 2027-04-25 | 2027-04-27 | RHD4CZ4A013IRR3103, RHD4CZ4A013IRR2402 | -112.02d |
|  | 6107 | **RHD4-02-002-A013-(IRR)-HDPE Pipes - 160 mm diameter** |  | 2027-05-05 | 2027-05-22 |  |  |
| RHD4CZ4A013IRR1100 |  | Excavation works for HDPE Pipline 160 mm - (RD-A-1 /3)-Z4-A013-IRR | 2d | 2027-05-05 | 2027-05-08 | RHD4CZ4A013IRR1103, RHD4CZ4A013IRR1503 | -122.02d |
| RHD4CZ4A013IRR1200 |  | Bedding works for HDPE Pipline 160 mm - (RD-A-1 /3)-Z4-A013-IRR | 2d | 2027-05-08 | 2027-05-10 | RHD4CZ4A013IRR1100 | -110.02d |
| RHD4CZ4A013IRR1300 |  | Installing for HDPE Pipline 160 mm - (RD-A-1 /3)-Z4-A013-IRR | 2d | 2027-05-10 | 2027-05-12 | RHD4CZ4A013IRR1200 | -110.02d |
| RHD4CZ4A013IRR1400 |  | Primary Test for HDPE Pipline 160 mm - (RD-A-1 /3)-Z4-A013-IRR | 2d | 2027-05-12 | 2027-05-19 | RHD4CZ4A013IRR1300 | -110.02d |
| RHD4CZ4A013IRR1500 |  | Backfilling and warning tape works for HDPE Pipline 160 mm - (RD-A-1 /3)-Z4-A013-IRR | 2d | 2027-05-19 | 2027-05-22 | RHD4CZ4A013IRR1400 | -110.02d |
|  | 6115 | **RHD4-02-002-A013-(IRR)-Gate Valves (Direct Buried)** |  | 2027-05-10 | 2027-05-26 |  |  |
| RHD4CZ4A013IRR3100 |  | Installation for Direct Buried Gate Valves - (RD-A-1 /3)-Z4-A013-IRR | 4d | 2027-05-10 | 2027-05-19 | RHD4CZ4A013IRR1300 SS, RHD4CZ4A013IRR1300 FF | -108.02d |
| RHD4CZ4A013IRR3200 |  | Stem and Service box for Direct Buried Gate Valves - (RD-A-1 /3)-Z4-A013-IRR | 4d | 2027-05-22 | 2027-05-26 | RHD4CZ4A013IRR3100, RHD4CZ4A013IRR1500 | -110.02d |
|  | 1769 | **RHD4-02-002-A013-(IRR)-Air Valve Chamber** |  | 2027-04-01 | 2027-04-11 |  |  |
| RHD4CZ4A013IRR2102 |  | Excavation and Bedding for Valve Chamber for Irrigation Network - (RD-A-1 /3)-Z4-A013-IRR | 2d | 2027-04-01 | 2027-04-04 | RHD4CZ4A013IRR1103 | -121.02d |
| RHD4CZ4A013IRR2202 |  | PC works for Valve Chamber for Irrigation Network - (RD-A-1 /3)-Z4-A013-IRR | 2d | 2027-04-04 | 2027-04-06 | RHD4CZ4A013IRR2102 | -100.02d |
| RHD4CZ4A013IRR2302 |  | Installation for Valve Chamber for Irrigation Network - (RD-A-1 /3)-Z4-A013-IRR | 2d | 2027-04-06 | 2027-04-08 | RHD4CZ4A013IRR2202 | -100.02d |
| RHD4CZ4A013IRR2402 |  | Backfilling works for Valve Chamber for Irrigation Network - (RD-A-1 /3)-Z4-A013-IRR | 2d | 2027-04-08 | 2027-04-11 | RHD4CZ4A013IRR2302 | -100.02d |
|  | 3113 | **RHD4-02-002-Z4-A013-Medium Voltage Network - MV** |  | 2027-02-18 | 2027-10-14 |  |  |
|  | 3115 | **RHD4-02-002-A013-(MV)-Medium Voltage duct banks** |  | 2027-02-18 | 2027-03-08 |  |  |
| RHD4CZ4A013MV2100 |  | Excavation of Duct Banks for Medium Voltage Network - (RD-A-1 /3)-Z4-A013-MV | 3d | 2027-02-18 | 2027-02-23 | RHD4ENSDZ4APPMV150, RHD4CZ4A013ST3500 | -142.02d |
| RHD4CZ4A013MV2200 |  | Installation of Duct Banks for Medium Voltage Network - (RD-A-1 /3)-Z4-A013-MV | 5d | 2027-02-23 | 2027-03-01 | RHD4CZ4A013MV2100, RHD4PRSHLDOSMV1000, RHD4PRSHLSTAGMV1000 | -142.02d |
| RHD4CZ4A013MV2300 |  | Pouring of Duct Banks for Medium Voltage Network - (RD-A-1 /3)-Z4-A013-MV | 3d | 2027-03-01 | 2027-03-04 | RHD4CZ4A013MV2200 | -142.02d |
| RHD4CZ4A013MV2400 |  | Backfilling of Duct Banks for Medium Voltage Network - (RD-A-1 /3)-Z4-A013-MV | 3d | 2027-03-04 | 2027-03-08 | RHD4CZ4A013MV2300 | -142.02d |
|  | 3114 | **RHD4-02-002-A013-(MV)-Medium Voltage cable trench** |  | 2027-08-16 | 2027-09-01 |  |  |
| RHD4CZ4A013MV1100 |  | Excavation for Medium Voltage Trench - (RD-A-1 /3)-Z4-A013-MV | 7d | 2027-08-16 | 2027-08-24 | RHD4ENSDZ4APPMV150, RHD4CZ4A013RD3100, RHD4CZ5L07LV3100 | -153.02d |
| RHD4CZ4A013MV1200 |  | Trench Backfilling for Medium Voltage Network - (RD-A-1 /3)-Z4-A013-MV | 7d | 2027-08-24 | 2027-09-01 | RHD4CZ4A013MV1100 | -128.02d |
|  | 3116 | **RHD4-02-002-A013-(MV)-Medium Voltage cables 3Cx 500 mm²** |  | 2027-08-24 | 2027-10-12 |  |  |
| RHD4CZ4A013MV3100 |  | Installation of Medium Voltage Cables 3Cx 500 mm² - (RD-A-1 /3)-Z4-A013-MV | 17d | 2027-08-24 | 2027-09-13 | RHD4CZ4A013MV1100, RHD4CZ4A013MV2400, RHD4PRSHLDOSMV1100, RHD4ENMSMV2000, RHD4ENMSMV2010, RHD4PRSHLSTAGMV1100 | -151.02d |
| RHD4CZ4A013MV3200 |  | Joints Installation of Medium Voltage Cables 3Cx 500 mm² - (RD-A-1 /3)-Z4-A013-MV | 13d | 2027-09-13 | 2027-09-29 | RHD4CZ4A013MV3100, RHD4PRSHLDOSMV1300, RHD4PRSHLSTAGMV1300 | -151.02d |
| RHD4CZ4A013MV3300 |  | Testing of Medium Voltage Cables 3Cx 500 mm² - (RD-A-1 /3)-Z4-A013-MV | 11d | 2027-09-29 | 2027-10-12 | RHD4CZ4A013MV3200, RHD4CZ4A013MV1200 | -151.02d |
|  | 5388 | **RHD4-02-002-A013-(MV)-Normally open Point (Outdoor Type)** |  |  |  |  |  |
|  | 1982 | **RHD4-02-002-A013-(MV)-Medium Voltage cables 3Cx 50 mm²** |  | 2027-10-12 | 2027-10-14 |  |  |
| RHD4CZ4A013MV3401 |  | Termination of Medium Voltage Cables 3Cx 50 mm² - (RD-A-1 /3)-Z4-A013-MV | 2d | 2027-10-12 | 2027-10-14 | RHD4CZ4A013MV3100, RHD4CZ4A013MV3300 | -151.02d |
|  | 4255 | **RHD4-02-002-Z4-A013-Low Voltage Network - LV** |  | 2027-04-04 | 2027-09-27 |  |  |
|  | 4256 | **RHD4-02-002-A013-(LV)-Low Voltage duct banks** |  | 2027-04-04 | 2027-04-14 |  |  |
| RHD4CZ4A013LV2100 |  | Excavation of Duct Banks for Low Voltage Network - (RD-A-1 /3)-Z4-A013-LV | 2d | 2027-04-04 | 2027-04-06 | RHD4CZ4A013IRR2102 | -121.02d |
| RHD4CZ4A013LV2200 |  | Installation of Duct Banks for Low Voltage Network - (RD-A-1 /3)-Z4-A013-LV | 3d | 2027-04-06 | 2027-04-10 | RHD4CZ4A013LV2100 | -118.02d |
| RHD4CZ4A013LV2300 |  | Pouring of Duct Banks for Low Voltage Network - (RD-A-1 /3)-Z4-A013-LV | 2d | 2027-04-10 | 2027-04-12 | RHD4CZ4A013LV2200 | -118.02d |
| RHD4CZ4A013LV2400 |  | Backfilling of Duct Banks for Low Voltage Network - (RD-A-1 /3)-Z4-A013-LV | 2d | 2027-04-12 | 2027-04-14 | RHD4CZ4A013LV2300 | -118.02d |
|  | 4257 | **RHD4-02-002-A013-(LV)-Low Voltage Drawpit** |  | 2027-09-21 | 2027-09-27 |  |  |
| RHD4CZ4A013LV5100 |  | Excavation of Drawpit size 900x900x1000mm for Low Voltage Network - (RD-A-1 /3)-Z4-A013-LV | 2d | 2027-09-21 | 2027-09-25 | RHD4CZ4A013LV4300, RHD4CZ4A013LV2300 | -153.02d |
| RHD4CZ4A013LV5200 |  | Installation of Drawpit size 900x900x1000mm for Low Voltage Network - (RD-A-1 /3)-Z4-A013-LV | 2d | 2027-09-25 | 2027-09-27 | RHD4CZ4A013LV5100 | -142.02d |
|  | 4258 | **RHD4-02-002-A013-(LV)-Low Voltage cables** |  | 2027-08-24 | 2027-09-14 |  |  |
| RHD4CZ4A013LV3100 |  | Excavation for Low Voltage Cables for Low Voltage Network - (RD-A-1 /3)-Z4-A013-LV | 5d | 2027-08-24 | 2027-08-30 | RHD4CZ4A013IRR2102, RHD4CZ4A013MV1100, RHD4CZ4A013IRR3203, RHD4CZ4A013IRR3200 | -153.02d |
| RHD4CZ4A013LV3200 |  | Cable Laying of Low Voltage Cables for Low Voltage Network - (RD-A-1 /3)-Z4-A013-LV | 5d | 2027-08-30 | 2027-09-05 | RHD4CZ4A013LV3100 | -153.02d |
| RHD4CZ4A013LV3300 |  | Warning tape and Backfill for Low Voltage Cables for Low Voltage Network - (RD-A-1 /3)-Z4-A013-LV | 5d | 2027-09-05 | 2027-09-11 | RHD4CZ4A013LV3200 | -153.02d |
| RHD4CZ4A013LV3400 |  | Testing of Low Voltage Cables for Low Voltage Network - (RD-A-1 /3)-Z4-A013-LV | 3d | 2027-09-11 | 2027-09-14 | RHD4CZ4A013LV3300 | -153.02d |
|  | 4259 | **RHD4-02-002-A013-(LV)-Low Voltage Distribution Pillars** |  | 2027-09-14 | 2027-09-21 |  |  |
| RHD4CZ4A013LV4100 |  | Leveling for Distribution Pillars for Low Voltage Network - (RD-A-1 /3)-Z4-A013-LV | 2d | 2027-09-14 | 2027-09-16 | RHD4CZ4A013LV3400, RHD4CZ4A013LV3300 | -153.02d |
| RHD4CZ4A013LV4200 |  | Lean Concrete for Distribution Pillars for Low Voltage Network - (RD-A-1 /3)-Z4-A013-LV | 2d | 2027-09-16 | 2027-09-19 | RHD4CZ4A013LV4100 | -153.02d |
| RHD4CZ4A013LV4300 |  | Installation of Distribution Pillars for Low Voltage Network - (RD-A-1 /3)-Z4-A013-LV | 2d | 2027-09-19 | 2027-09-21 | RHD4CZ4A013LV4200 | -153.02d |
|  | 3126 | **RHD4-02-002-Z4-A013-Street Lighting Network - SL** |  | 2027-04-06 | 2027-06-08 |  |  |

| ID | WBS | Task | Duration | Start | Finish | Predecessors | Complete | Total float |
| --- | --- | --- | --- | --- | --- | --- | --- | --- |
|  | 3127 | **RHD4-02-002-A013-(SL)-Street Lighting duct banks** |  | 2027-04-06 | 2027-04-20 |  |  |  |
| RHD4CZ4A013SL2100 |  | Excavation of Duct Banks for Street Lighting Network - (RD-A-1 /3)-Z4-A013-SL | 3d | 2027-04-06 | 2027-04-10 | RHD4ENSDZ4APPSL170, RHD4CZ4A013LV2100 |  | -121.02d |
| RHD4CZ4A013SL2200 |  | Installation of Duct Banks for Street Lighting Network - (RD-A-1 /3)-Z4-A013-SL | 4d | 2027-04-10 | 2027-04-14 | RHD4CZ4A013SL2100 |  | -121.02d |
| RHD4CZ4A013SL2300 |  | Pouring of Duct Banks for Street Lighting Network - (RD-A-1 /3)-Z4-A013-SL | 3d | 2027-04-14 | 2027-04-18 | RHD4CZ4A013SL2200 |  | -121.02d |
| RHD4CZ4A013SL2400 |  | Backfilling of Duct Banks for Street Lighting Network - (RD-A-1 /3)-Z4-A013-SL | 2d | 2027-04-18 | 2027-04-20 | RHD4CZ4A013SL2300 |  | -121.02d |
|  | 3129 | **RHD4-02-002-A013-(SL)-Street Lighting cables** |  | 2027-05-08 | 2027-06-08 |  |  |  |
| RHD4CZ4A013SL3100 |  | Excavation for Street Lighting Cables for Street Lighting Network - (RD-A-1 /3)-Z4-A013-SL | 7d | 2027-05-08 | 2027-05-20 | RHD4ENSDZ4APPSL170, RHD4CZ4A013IRR1100, RHD4CZ4A013SL1100 |  | -122.02d |
| RHD4CZ4A013SL3200 |  | Cable Laying of Street Lighting Cables for Street Lighting Network - (RD-A-1 /3)-Z4-A013-SL | 6d | 2027-05-20 | 2027-05-27 | RHD4CZ4A013SL3100, RHD4ENMSSL2000, RHD4ENMSSL2010 |  | -122.02d |
| RHD4CZ4A013SL3300 |  | Warning tape and Backfill for Street Lighting Cables for Street Lighting Network - (RD-A-1 /3)-Z4-A013-SL | 6d | 2027-05-27 | 2027-06-03 | RHD4CZ4A013SL3200 |  | -122.02d |
| RHD4CZ4A013SL3400 |  | Testing of Street Lighting Cables for Street Lighting Network - (RD-A-1 /3)-Z4-A013-SL | 4d | 2027-06-03 | 2027-06-08 | RHD4CZ4A013SL3300 |  | -109.02d |
|  | 3130 | **RHD4-02-002-A013-(SL)-Street Lighting Poles** |  | 2027-04-20 | 2027-05-26 |  |  |  |
| RHD4CZ4A013SL1100 |  | Excavation for RC Base for Lighting Poles for Street Lighting Network - (RD-A-1 /3)-Z4-A013-SL | 4d | 2027-04-20 | 2027-04-25 | RHD4CZ4A013SL2400, RHD4ENSDZ4APPSL170 |  | -121.02d |
| RHD4CZ4A013SL1200 |  | Installation for RC Base for Lighting Poles for Street Lighting Network - (RD-A-1 /3)-Z4-A013-SL | 4d | 2027-04-25 | 2027-04-29 | RHD4CZ4A013SL1100 |  | -118.02d |
| RHD4CZ4A013SL1300 |  | Backfill for RC Base for Lighting Poles for Street Lighting Network - (RD-A-1 /3)-Z4-A013-SL | 4d | 2027-04-29 | 2027-05-04 | RHD4CZ4A013SL1200 |  | -118.02d |
| RHD4CZ4A013SL1400 |  | Installation for Lighting Poles for Street Lighting Network - (RD-A-1 /3)-Z4-A013-SL | 6d | 2027-05-04 | 2027-05-11 | RHD4CZ4A013SL1300, RHD4PRSHLDOSSL1200, RHD4ENMSSL2000, RHD4ENMSSL2010, RHD4PRSHLSTAGSL1200 |  | -115.02d |
| RHD4CZ4A013SL1500 |  | Luminaire Installation for Lighting Poles for Street Lighting Network - (RD-A-1 /3)-Z4-A013-SL | 7d | 2027-05-13 | 2027-05-26 | RHD4CZ4A013SL1400, RHD4CZ4A013SL6100, RHD4PRSHLDOSSL1300, RHD4PRSHLSTAGSL1300 |  | -115.02d |
|  | 3132 | **RHD4-02-002-A013-(SL)-Street Lighting Earthing System** |  | 2027-05-11 | 2027-05-13 |  |  |  |
| RHD4CZ4A013SL6100 |  | Installation of Earthing for Lighting Poles and Fedder Pillers for Street Lighting Network - (RD-A-1 /3)-Z4-A013-SL | 2d | 2027-05-11 | 2027-05-13 | RHD4CZ4A013SL1400, RHD4ENMSER2000, RHD4ENMSER2010, RHD4CZ4A013SL5200 FF |  | -115.02d |
|  | 3128 | **RHD4-02-002-A013-(SL)-Street Lighting Drawpit** |  | 2027-04-25 | 2027-04-29 |  |  |  |
| RHD4CZ4A013SL5100 |  | Excavation of Drawpit size 600x600x900mm for Street Lighting Network - (RD-A-1 /3)-Z4-A013-SL | 2d | 2027-04-25 | 2027-04-27 | RHD4CZ4A013SL2300, RHD4ENSDZ4APPSL170, RHD4CZ4A013SL1100 |  | -121.02d |
| RHD4CZ4A013SL5200 |  | Installation of Drawpit size 600x600x900mm for Street Lighting Network - (RD-A-1 /3)-Z4-A013-SL | 2d | 2027-04-27 | 2027-04-29 | RHD4CZ4A013SL5100, RHD4PRSHLDOSSL1400, RHD4PRSHLSTAGSL1400 |  | -121.02d |
|  | 3138 | **RHD4-02-002-Z4-A013-Telecommunications Network - TC** |  | 2027-05-04 | 2027-06-15 |  |  |  |
|  | 3139 | **RHD4-02-002-A013-(TC)-Telecommunications Ducts** |  | 2027-05-04 | 2027-06-15 |  |  |  |
| RHD4CZ4A013TC2100 |  | Excavation of HDPE Ducts for Telecom Network - (RD-A-1 /3)-Z4-A013-TC | 9d | 2027-05-04 | 2027-05-19 | RHD4ENSDZ4APPTC190, RHD4CZ4A013IRR2102, RHD4CZ4A013SL1300, RHD4CZ4A013IRR3203 |  | -118.02d |
| RHD4CZ4A013TC2200 |  | Installation of HDPE Ducts for Telecom Network - (RD-A-1 /3)-Z4-A013-TC | 14d | 2027-05-19 | 2027-06-05 | RHD4CZ4A013TC2100, RHD4PRSHLDOSTC1000, RHD4PRSHLSTAGTC1000 |  | -118.02d |
| RHD4CZ4A013TC2400 |  | Backfilling of HDPE Ducts for Telecom Network - (RD-A-1 /3)-Z4-A013-TC | 9d | 2027-06-05 | 2027-06-15 | RHD4CZ4A013TC2200, RHD4CZ4A013TC5200, RHD4CZ4A013IRR3200 |  | -118.02d |
|  | 3140 | **RHD4-02-002-A013-(TC)-Telecommunications Manholes** |  | 2027-05-19 | 2027-05-26 |  |  |  |
| RHD4CZ4A013TC5100 |  | Excavation for Manholes for Telecom Network - (RD-A-1 /3)-Z4-A013-TC | 3d | 2027-05-19 | 2027-05-23 | RHD4CZ4A013TC2100, RHD4ENSDZ4APPTC190 |  | -110.02d |
| RHD4CZ4A013TC5200 |  | Installation of Manholes for Telecom Network - (RD-A-1 /3)-Z4-A013-TC | 3d | 2027-05-23 | 2027-05-26 | RHD4CZ4A013TC5100, RHD4CZ4A013TC2200 SS, RHD4PRSHLDOSTC1200, RHD4PRSHLSTAGTC1200 |  | -110.02d |
|  | 5411 | **RHD4-02-002-A013-(TC)-Telecomminications Road Crossings** |  |  |  |  |  |  |
|  | 3142 | **RHD4-02-002-Z4-A013-Information and Communication Technologies - ICT** |  | 2027-04-10 | 2027-07-29 |  |  |  |
|  | 3143 | **RHD4-02-002-A013-(ICT)-Information and Communication Technologies Ducts** |  | 2027-06-03 | 2027-07-29 |  |  |  |
| RHD4CZ4A013ICT2100 |  | Excavation of HDPE Ducts for ICT Network - (RD-A-1 /3)-Z4-A013-ICT | 17d | 2027-06-03 | 2027-06-23 | RHD4CZ4A013SL3300, RHD4ENSDZ4APPICT200, RHD4CZ4A013SL6100, RHD4CZ4A013SL1500 |  | -122.02d |
| RHD4CZ4A013ICT2200 |  | Installation of HDPE Ducts for ICT Network - (RD-A-1 /3)-Z4-A013-ICT | 11d | 2027-06-23 | 2027-07-06 | RHD4CZ4A013ICT2100, RHD4PRSHLDOSICT1000, RHD4PRSHLSTAGICT1000 |  | -119.02d |
| RHD4CZ4A013ICT2400 |  | Backfilling of HDPE Ducts for ICT Network - (RD-A-1 /3)-Z4-A013-ICT | 17d | 2027-07-10 | 2027-07-29 | RHD4CZ4A013ICT2200, RHD4CZ4A013ICT5200 |  | -122.02d |
|  | 3144 | **RHD4-02-002-A013-(ICT)-Information and Communication Technologies Manholes** |  | 2027-06-23 | 2027-07-10 |  |  |  |
| RHD4CZ4A013ICT5100 |  | Excavation for Manholes for ICT Network - (RD-A-1 /3)-Z4-A013-ICT | 7d | 2027-06-23 | 2027-07-01 | RHD4CZ4A013ICT2100, RHD4ENSDZ4APPICT200, RHD4CZ4A013SL3400 |  | -122.02d |
| RHD4CZ4A013ICT5200 |  | Installation of Manholes for ICT Network - (RD-A-1 /3)-Z4-A013-ICT | 7d | 2027-07-01 | 2027-07-10 | RHD4CZ4A013ICT5100, RHD4CZ4A013ICT2200 SS, RHD4PRSHLDOSICT1200, RHD4PRSHLSTAGICT1200 |  | -122.02d |
|  | 5415 | **RHD4-02-002-A013-(ICT)-Information and Communication Technologies Road Crossings** |  | 2027-04-10 | 2027-05-05 |  |  |  |
| RHD4CZ4A013ICT3100 |  | Excavation for Road Crossings for ICT Network - (RD-A-1 /3)-Z4-A013-ICT | 5d | 2027-04-10 | 2027-04-15 | RHD4ENSDZ4APPICT200, RHD4CZ4A013SL2100 |  | -121.02d |
| RHD4CZ4A013ICT3200 |  | Installation of Road Crossings for ICT Network - (RD-A-1 /3)-Z4-A013-ICT | 6d | 2027-04-15 | 2027-04-22 | RHD4CZ4A013ICT3100 |  | -121.02d |
| RHD4CZ4A013ICT3300 |  | Pouring of Road Crossings for ICT Network - (RD-A-1 /3)-Z4-A013-ICT | 6d | 2027-04-22 | 2027-04-29 | RHD4CZ4A013ICT3200 |  | -121.02d |
| RHD4CZ4A013ICT3400 |  | Backfilling of Road Crossings for ICT Network - (RD-A-1 /3)-Z4-A013-ICT | 5d | 2027-04-29 | 2027-05-05 | RHD4CZ4A013ICT3300 |  | -121.02d |
|  | 3133 | **RHD4-02-002-Z4-A013-Landscape Network - LS** |  |  |  |  |  |  |
|  | 3134 | **RHD4-02-002-A013-(LS)-Landscape Lighting cables** |  |  |  |  |  |  |
|  | 3135 | **RHD4-02-002-A013-(LS)-Landscape Feeder Pillars** |  |  |  |  |  |  |
|  | 3136 | **RHD4-02-002-A013-(LS)-Landscape Bollard Poles** |  |  |  |  |  |  |
|  | 3137 | **RHD4-02-002-A013-(LS)-Landscape Feeder Pillars Earthing** |  |  |  |  |  |  |
|  | 3146 | **RHD4-02-002-Z4-A013-Security Network - CCTV** |  |  |  |  |  |  |
|  | 3147 | **RHD4-02-002-A013-(CCTV)-Civil Works** |  |  |  |  |  |  |
|  | 3148 | **RHD4-02-002-A013-(CCTV)-CCTV Poles** |  |  |  |  |  |  |
|  | 3149 | **RHD4-02-002-A013-(CCTV)-Camera** |  |  |  |  |  |  |
|  | 3150 | **RHD4-02-002-A013-(CCTV)-Power and Infrastructure** |  |  |  |  |  |  |
|  | 3152 | **RHD4-02-002-A013-(CCTV)-CCTV Panels and Components** |  |  |  |  |  |  |
|  | 3163 | **RHD4-02-002-Z4-RA02** |  | 2026-06-30 | 2027-07-24 |  |  |  |
|  | 3342 | **RHD4-02-002-Z4-RA02-Road Works - RD** |  | 2026-06-30 | 2027-07-24 |  |  |  |
|  | 3343 | **RHD4-02-002-RA02-(RD)-Subgrade** |  | 2026-06-30 | 2026-07-19 |  |  |  |
| RHD4CZ4RA02RD1100 |  | Supply, lay and compaction subgrade compacted thickness 300 mm for Roads - (ROUND-02)-Z4-RA02-RD | 5d | 2026-06-30 A | 2026-07-19 A | RHD4ENSDZ4APPRD220, RHD4CZ4A013RD1100, RHD4ENSDZ4APPEW100 SS | 100% |  |
|  | 3344 | **RHD4-02-002-RA02-(RD)-Aggregate Base Course** |  | 2027-02-14 | 2027-02-20 |  |  |  |
| RHD4CZ4RA02RD2100 |  | Supply, lay and compaction Aggregate base course compacted thickness 300 mmfor Roads - (ROUND-02)-Z4-RA02-RD | 5d | 2027-02-14 | 2027-02-20 | RHD4CZ4RA02RD1100 |  | -157.02d |
|  | 3345 | **RHD4-02-002-RA02-(RD)-Bituminous base course Two Layers, including (MC1)&(RC2)** |  | 2027-02-20 | 2027-06-17 |  |  |  |
| RHD4CZ4RA02RD3100 |  | Supply, lay and Asphaltic base course including Prime Coat (MC1) for 1st Layer - (ROUND-02)-Z4-RA02-RD | 3d | 2027-02-20 | 2027-02-24 | RHD4CZ4RA02RD2100, RHD4PRSHLDOSRD1100, RHD4ENMSASPH2000, RHD4ENMSASPH2010, RHD4PRSHLSTAGRD1100 |  | -155.02d |
| RHD4CZ4RA02RD3200 |  | Supply, lay and Asphaltic base course including Tack Coat (RC2) for 2nd Layer - (ROUND-02)-Z4-RA02-RD | 3d | 2027-06-14 | 2027-06-17 | RHD4CZ4RA02RD3100, RHD4PRSHLDOSRD1100, RHD4PRSHLSTAGRD1100, RHD4CZ4RA02CCTV2100, RHD4CZ4RA02CCTV6100 |  | -113.06d |
|  | 3347 | **RHD4-02-002-RA02-(RD)-Precast Concrete Curb** |  | 2027-06-17 | 2027-06-24 |  |  |  |
| RHD4CZ4RA02RD5100 |  | Supply and installation Precast Concrete Kerb for Roads - (ROUND-02)-Z4-RA02-RD | 6d | 2027-06-17 | 2027-06-24 | RHD4CZ4RA02RD3200, RHD4PRSHLDOSRD1200, RHD4ENMSRD2000, RHD4ENMSRD2010, RHD4PRSHLSTAGRD1200 |  | -112.06d |
|  | 3350 | **RHD4-02-002-RA02-(RD)-Traffic Signage** |  | 2027-06-24 | 2027-07-06 |  |  |  |
| RHD4CZ4RA02RD8100 |  | Installation of Traffic Signage for Road Network - (ROUND-02)-Z4-RA02-RD | 10d | 2027-06-24 | 2027-07-06 | RHD4CZ4RA02RD5100, RHD4PRSHLDOSRD1600, RHD4PRSHLDOSST1401, RHD4PRSHLDOSRD1500, RHD4PRSHLSTAGRD1600, RHD4PRSHLSTAGRD1500 |  | -93.06d |
|  | 3348 | **RHD4-02-002-RA02-(RD)-Precast Interlocking Block Pavers** |  |  |  |  |  |  |
|  | 3346 | **RHD4-02-002-RA02-(RD)-Bituminous concrete wearing course including tack coat (RC2)** |  | 2027-06-24 | 2027-06-27 |  |  |  |
| RHD4CZ4RA02RD4100 |  | Supply, lay and compaction Asphaltic wearing course including tack Coat (RC2)for Road Network - (ROUND-02)-Z4-RA02-RD | 2d | 2027-06-24 | 2027-06-27 | RHD4CZ4RA02RD5100 |  | -112.06d |

| ID | WBS | Task | Duration | Start | Finish | Predecessors | Total float |
| --- | --- | --- | --- | --- | --- | --- | --- |
|  | 3349 | **RHD4-02-002-RA02-(RD)-Pavement Marking** |  | 2027-06-27 | 2027-07-24 |  |  |
| RHD4CZ4RA02RD7100 |  | Pavement Markings for Road Network - (ROUND-02)-Z4-RA02-RD | 8d | 2027-06-27 | 2027-07-06 | RHD4CZ4RA02RD4100, RHD4PRSHLDOSRD1500, RHD4PRSHLSTAGRD1500 | -112.06d |
| RHD4CZ4RA02RD9100 |  | Installation for Speed Bump for Road Network - (ROUND-02)-Z4-RA02-RD | 15d | 2027-07-06 | 2027-07-24 | RHD4CZ4RA02RD8100, RHD4CZ4RA02SL5200 | -93.06d |
|  | 3167 | **RHD4-02-002-Z4-RA02-Storm Network - ST** |  |  |  |  |  |
|  | 3186 | **RHD4-02-002-RA02-(ST)-MH Works - 2000 mm diameter** |  |  |  |  |  |
|  | 3185 | **RHD4-02-002-RA02-(ST)-MH Works - 1500 mm diameter** |  |  |  |  |  |
|  | 3184 | **RHD4-02-002-RA02-(ST)-MH Works - 1200 mm diameter** |  |  |  |  |  |
|  | 3175 | **RHD4-02-002-RA02-(ST)-GRP Pipes - 1100 mm diameter** |  |  |  |  |  |
|  | 3173 | **RHD4-02-002-RA02-(ST)-GRP Pipes - 900 mm diameter** |  |  |  |  |  |
|  | 3168 | **RHD4-02-002-RA02-(ST)-GRP Pipes - 400 mm diameter** |  |  |  |  |  |
|  | 3183 | **RHD4-02-002-RA02-(ST)-UPVC Pipes - 400 mm diameter** |  |  |  |  |  |
|  | 3182 | **RHD4-02-002-RA02-(ST)-UPVC Pipes - 300 mm diameter** |  |  |  |  |  |
|  | 3190 | **RHD4-02-002-RA02-(ST)-Concrete Encasement** |  |  |  |  |  |
|  | 3191 | **RHD4-02-002-Z4-RA02-Catch Basin - ST** |  |  |  |  |  |
|  | 3192 | **RHD4-02-002-RA02-(ST)-Single Catch Basin Works** |  |  |  |  |  |
|  | 3193 | **RHD4-02-002-RA02-(ST)-Double Catch Basin Works** |  |  |  |  |  |
|  | 1978 | **RHD4-02-002-Z4-RA02-Medium Voltage Network - MV** |  |  |  |  |  |
|  | 1979 | **RHD4-02-002-RA02-(MV)-Medium Voltage cable trench** |  |  |  |  |  |
|  | 1981 | **RHD4-02-002-RA02-(MV)-Medium Voltage cables 3Cx 500 mm²** |  |  |  |  |  |
|  | 3309 | **RHD4-02-002-Z4-RA02-Low Voltage Network - LV** |  |  |  |  |  |
|  | 3312 | **RHD4-02-002-RA02-(LV)-Low Voltage cables** |  |  |  |  |  |
|  | 4259 | **RHD4-02-002-RA02-(LV)-Low Voltage Distribution Pillars** |  |  |  |  |  |
|  | 3315 | **RHD4-02-002-Z4-RA02-Street Lighting Network - SL** |  | 2027-04-10 | 2027-05-19 |  |  |
|  | 3316 | **RHD4-02-002-RA02-(SL)-Street Lighting duct banks** |  | 2027-04-10 | 2027-04-24 |  |  |
| RHD4CZ4RA02SL2100 |  | Excavation of Duct Banks for Street Lighting Network - (ROUND-02)-Z4-RA02-SL | 3d | 2027-04-10 | 2027-04-13 | RHD4CZ4RA02RA3000, RHD4ENSDZ4APPSL170, RHD4CZ4A013SL2100 | -121.02d |
| RHD4CZ4RA02SL2200 |  | Installation of Duct Banks for Street Lighting Network - (ROUND-02)-Z4-RA02-SL | 4d | 2027-04-13 | 2027-04-18 | RHD4CZ4RA02SL2100, RHD4PRSHLDOSSL1000, RHD4PRSHLSTAGSL1000 | -121.02d |
| RHD4CZ4RA02SL2300 |  | Pouring of Duct Banks for Street Lighting Network - (ROUND-02)-Z4-RA02-SL | 3d | 2027-04-18 | 2027-04-21 | RHD4CZ4RA02SL2200 | -121.02d |
| RHD4CZ4RA02SL2400 |  | Backfilling of Duct Banks for Street Lighting Network - (ROUND-02)-Z4-RA02-SL | 2d | 2027-04-21 | 2027-04-24 | RHD4CZ4RA02SL2300 | -121.02d |
|  | 3318 | **RHD4-02-002-RA02-(SL)-Street Lighting cables** |  | 2027-04-13 | 2027-04-22 |  |  |
| RHD4CZ4RA02SL3100 |  | Excavation for Street Lighting Cables for Street Lighting Network - (ROUND-02)-Z4-RA02-SL | 2d | 2027-04-13 | 2027-04-15 | RHD4ENSDZ4APPSL170, RHD4CZ4RA02SL2100, RHD4CZ4RA02RD3100 | -114.02d |
| RHD4CZ4RA02SL3200 |  | Cable Laying of Street Lighting Cables for Street Lighting Network - (ROUND-02)-Z4-RA02-SL | 2d | 2027-04-15 | 2027-04-18 | RHD4CZ4RA02SL3100, RHD4PRSHLDOSSL1100, RHD4ENMSSL2000, RHD4ENMSSL2010, RHD4PRSHLSTAGSL1100 | -114.02d |
| RHD4CZ4RA02SL3300 |  | Warning tape and Backfill for Street Lighting Cables for Street Lighting Network - (ROUND-02)-Z4-RA02-SL | 2d | 2027-04-18 | 2027-04-20 | RHD4CZ4RA02SL3200 | -114.02d |
| RHD4CZ4RA02SL3400 |  | Testing of Street Lighting Cables for Street Lighting Network - (ROUND-02)-Z4-RA02-SL | 2d | 2027-04-20 | 2027-04-22 | RHD4CZ4RA02SL3300 | -114.02d |
|  | 3319 | **RHD4-02-002-RA02-(SL)-Street Lighting Poles** |  | 2027-04-24 | 2027-05-05 |  |  |
| RHD4CZ4RA02SL1100 |  | Excavation for RC Base for Lighting Poles for Street Lighting Network - (ROUND-02)-Z4-RA02-SL | 2d | 2027-04-24 | 2027-04-26 | RHD4CZ4RA02SL2400, RHD4ENSDZ4APPSL170, RHD4CZ4RA02SL3100 | -121.02d |
| RHD4CZ4RA02SL1200 |  | Installation for RC Base for Lighting Poles for Street Lighting Network - (ROUND-02)-Z4-RA02-SL | 2d | 2027-04-26 | 2027-04-28 | RHD4CZ4RA02SL1100 | -121.02d |
| RHD4CZ4RA02SL1300 |  | Backfill for RC Base for Lighting Poles for Street Lighting Network - (ROUND-02)-Z4-RA02-SL | 2d | 2027-04-28 | 2027-05-01 | RHD4CZ4RA02SL1200 | -121.02d |
| RHD4CZ4RA02SL1400 |  | Installation for Lighting Poles for Street Lighting Network - (ROUND-02)-Z4-RA02-SL | 2d | 2027-05-01 | 2027-05-03 | RHD4CZ4RA02SL1300, RHD4CZ4RA02SL3400, RHD4PRSHLDOSSL1200, RHD4ENMSSL2000, RHD4ENMSSL2010, RHD4PRSHLSTAGSL1200 | -121.02d |
| RHD4CZ4RA02SL1500 |  | Luminaire Installation for Lighting Poles for Street Lighting Network - (ROUND-02)-Z4-RA02-SL | 2d | 2027-05-03 | 2027-05-05 | RHD4CZ4RA02SL1400, RHD4PRSHLDOSSL1300, RHD4PRSHLSTAGSL1300 | -121.02d |
|  | 5023 | **RHD4-02-002-RA02-(SL)-Street Lighting Feeder Pillars** |  | 2027-05-05 | 2027-05-12 |  |  |
| RHD4CZ4RA02SL4100 |  | Leveling for Distribution Pillars for Street Lighting Network - (ROUND-02)-Z4-RA02-SL | 2d | 2027-05-05 | 2027-05-08 | RHD4CZ4RA02SL1500, RHD4CZ4RA02SL3300 | -121.02d |
| RHD4CZ4RA02SL4200 |  | Lean Concrete for Distribution Pillars for Street Lighting Network - (ROUND-02)-Z4-RA02-SL | 2d | 2027-05-08 | 2027-05-10 | RHD4CZ4RA02SL4100 | -121.02d |
| RHD4CZ4RA02SL4300 |  | Installation of Distribution Pillars for Street Lighting Network - (ROUND-02)-Z4-RA02-SL | 2d | 2027-05-10 | 2027-05-12 | RHD4CZ4RA02SL4200 | -121.02d |
|  | 5024 | **RHD4-02-002-RA02-(SL)-Street Lighting Earthing System** |  | 2027-05-12 | 2027-05-19 |  |  |
| RHD4CZ4RA02SL6100 |  | Installation of Earthing for Lighting Poles and Fedder Pillers for Street Lighting Network - (ROUND-02)-Z4-RA02-SL | 2d | 2027-05-12 | 2027-05-19 | RHD4CZ4RA02SL4300 FF, RHD4CZ4RA02SL4300 | -121.02d |
|  | 3317 | **RHD4-02-002-RA02-(SL)-Street Lighting Drawpit** |  | 2027-04-21 | 2027-04-26 |  |  |
| RHD4CZ4RA02SL5100 |  | Excavation of Drawpit size 600x600x900mm for Street Lighting Network - (ROUND-02)-Z4-RA02-SL | 2d | 2027-04-21 | 2027-04-24 | RHD4CZ4RA02SL2300, RHD4ENSDZ4APPSL170, RHD4CZ4RA02RD3100 | -98.06d |
| RHD4CZ4RA02SL5200 |  | Installation of Drawpit size 600x600x900mm for Street Lighting Network - (ROUND-02)-Z4-RA02-SL | 2d | 2027-04-24 | 2027-04-26 | RHD4CZ4RA02SL5100, RHD4PRSHLDOSSL1400, RHD4PRSHLSTAGSL1400 | -98.06d |
|  | 3322 | **RHD4-02-002-Z4-RA02-Landscape Network - LS** |  |  |  |  |  |
|  | 3323 | **RHD4-02-002-RA02-(LS)-Landscape Lighting cables** |  |  |  |  |  |
|  | 3324 | **RHD4-02-002-RA02-(LS)-Landscape Feeder Pillars** |  |  |  |  |  |
|  | 3325 | **RHD4-02-002-RA02-(LS)-Landscape Bollard Poles** |  |  |  |  |  |
|  | 3326 | **RHD4-02-002-RA02-(LS)-Landscape Feeder Pillars Earthing** |  |  |  |  |  |
|  | 3335 | **RHD4-02-002-Z4-RA02-Security Network - CCTV** |  | 2027-05-19 | 2027-06-14 |  |  |
|  | 3336 | **RHD4-02-002-RA02-(CCTV)-Civil Works** |  | 2027-05-19 | 2027-05-31 |  |  |
| RHD4CZ4RA02CCTV2100 |  | Civil Works for Security Network - (ROUND-02)-Z4-RA02-CCTV | 10d | 2027-05-19 | 2027-05-31 | RHD4CZ4RA02SL6100 | -121.02d |
|  | 2959 | **RHD4-02-002-RA02-(CCTV)-CCTV Poles** |  | 2027-05-19 | 2027-05-31 |  |  |
| RHD4CZ4RA02CCTV1100 |  | Excavation for RC Base for CCTV Poles for Security Network - (RD-C-3/1)-Z4-C031-CCTV | 2d | 2027-05-19 | 2027-05-22 | RHD4CZ4RA02SL5200, RHD4CZ4RA02SL6100 | -114.06d |
| RHD4CZ4RA02CCTV1200 |  | Installation for RC Base for CCTV Poles for Security Network - (RD-C-3/1)-Z4-C031-CCTV | 2d | 2027-05-22 | 2027-05-24 | RHD4CZ4RA02CCTV1100 | -114.06d |
| RHD4CZ4RA02CCTV1300 |  | Backfill for RC Base for CCTV Poles for Security Network - (RD-C-3/1)-Z4-C031-CCTV | 2.03d | 2027-05-24 | 2027-05-26 | RHD4CZ4RA02CCTV1200 | -114.06d |
| RHD4CZ4RA02CCTV1400 |  | Installation for CCTV Poles for Security Network - (RD-C-3/1)-Z4-C031-CCTV | 2d | 2027-05-26 | 2027-05-29 | RHD4CZ4RA02CCTV1300 | -114.06d |
| RHD4CZ4RA02CCTV1500 |  | Protection post Installation for CCTV Poles for Security Network - (RD-C-3/1)-Z4-C031-CCTV | 2d | 2027-05-29 | 2027-05-31 | RHD4CZ4RA02CCTV1400 | -114.06d |
|  | 2960 | **RHD4-02-002-RA02-(CCTV)-Camera** |  | 2027-05-31 | 2027-06-02 |  |  |
| RHD4CZ4RA02CCTV3100 |  | Installation for Cameras for Security Network - (RD-C-3/1)-Z4-C031-CCTV | 2d | 2027-05-31 | 2027-06-02 | RHD4CZ4RA02CCTV1400, RHD4CZ4RA02CCTV4100 | -113.06d |
|  | 2961 | **RHD4-02-002-RA02-(CCTV)-Power and Infrastructure** |  | 2027-05-29 | 2027-06-02 |  |  |
| RHD4CZ4RA02CCTV4100 |  | Installation of Power outlet, UPS and midspan for PTZ Camerafor Cameras for Security Network - (RD-C-3/1)-Z4-C031-CCTV | 2.01d | 2027-05-29 | 2027-05-31 | RHD4CZ4RA02CCTV1400 | -113.06d |
| RHD4CZ4RA02CCTV4200 |  | Short Range Wireless PoP wireless Bridgefor CCTV Poles for Security Network - (RD-C-3/1)-Z4-C031-CCTV | 2d | 2027-05-31 | 2027-06-02 | RHD4CZ4RA02CCTV4100 | -113.06d |
|  | 2963 | **RHD4-02-002-RA02-(CCTV)-CCTV Panels and Components** |  | 2027-06-02 | 2027-06-14 |  |  |
| RHD4CZ4RA02CCTV6100 |  | Installation for CCTV Panels for Security Network - (RD-C-3/1)-Z4-C031-CCTV | 10d | 2027-06-02 | 2027-06-14 | RHD4CZ4RA02CCTV4200, RHD4CZ4RA02CCTV3100 | -113.06d |
|  | 2785 | **RHD4-02-002-Z4-C031** |  | 2026-06-30 | 2027-07-07 |  |  |

| ID | WBS | Task | Duration | Start | Finish | Predecessors | Complete | Total float |
| --- | --- | --- | --- | --- | --- | --- | --- | --- |
|  | 2860 | **RHD4-02-002-Z4-C031-Crossings Potable Network - PTCr** |  |  |  |  |  |  |
|  | 2864 | **RHD4-02-002-C031-(PTCr)-HDPE Pipes - 400 mm diameter** |  |  |  |  |  |  |
|  | 2964 | **RHD4-02-002-Z4-C031-Road Works - RD** |  | 2026-06-30 | 2027-07-05 |  |  |  |
|  | 2965 | **RHD4-02-002-C031-(RD)-Subgrade** |  | 2026-06-30 | 2026-07-13 |  |  |  |
| RHD4CZ4C031RD1100 |  | Supply, lay and compaction subgrade compacted thickness 300 mm for Roads - (RD-C-3/1)-Z4-C031-RD | 12d | 2026-06-30 A | 2026-07-13 A | RHD4ENSDZ4APPRD220, RHD4ENSDZ4APPEW100 SS, RHD4CZ4C031ST3302, RHD4CZ4C031ICT3400 | 100% |  |
|  | 2966 | **RHD4-02-002-C031-(RD)-Aggregate Base Course** |  | 2027-02-21 | 2027-02-23 |  |  |  |
| RHD4CZ4C031RD2100 |  | Supply, lay and compaction Aggregate base course compacted thickness 300 mmfor Roads - (RD-C-3/1)-Z4-C031-RD | 2d | 2027-02-21 | 2027-02-23 | RHD4PRSHLDOSRD1000, RHD4PRSHLSTAGRD1000, RHD4CZ4C031RD1100 |  | -154d |
|  | 2967 | **RHD4-02-002-C031-(RD)-Bituminous base course Two Layers, including (MC1)&(RC2)** |  | 2027-02-24 | 2027-06-22 |  |  |  |
| RHD4CZ4C031RD3100 |  | Supply, lay and Asphaltic base course including Prime Coat (MC1) for 1st Layer - (RD-C-3/1)-Z4-C031-RD | 2d | 2027-02-24 | 2027-02-25 | RHD4CZ4C031RD2100, RHD4PRSHLDOSRD1100, RHD4ENMSASPH2000, RHD4ENMSASPH2010, RHD4PRSHLSTAGRD1100 |  | -154d |
| RHD4CZ4C031RD3200 |  | Supply, lay and Asphaltic base course including Tack Coat (RC2) for 2nd Layer - (RD-C-3/1)-Z4-C031-RD | 2d | 2027-06-20 | 2027-06-22 | RHD4CZ4C031RD3100, RHD4CZ4RA02RD3200, RHD4PRSHLDOSRD1100, RHD4PRSHLSTAGRD1100, RHD4CZ4C031CCTV4200 |  | -115.02d |
|  | 2969 | **RHD4-02-002-C031-(RD)-Precast Concrete Curb** |  | 2027-06-22 | 2027-06-27 |  |  |  |
| RHD4CZ4C031RD5100 |  | Supply and installation Precast Concrete Kerb for Roads - (RD-C-3/1)-Z4-C031-RD | 4d | 2027-06-22 | 2027-06-27 | RHD4CZ4C031RD3200, RHD4PRSHLDOSRD1200, RHD4ENMSRD2000, RHD4ENMSRD2010, RHD4PRSHLSTAGRD1200 |  | -115.02d |
|  | 2972 | **RHD4-02-002-C031-(RD)-Traffic Signage** |  | 2027-06-27 | 2027-07-04 |  |  |  |
| RHD4CZ4C031RD8100 |  | Installation of Traffic Signage for Road Network - (RD-C-3/1)-Z4-C031-RD | 6d | 2027-06-27 | 2027-07-04 | RHD4CZ4C031RD5100, RHD4CZ4C031TC2400, RHD4CZ4C031ICT2400, RHD4PRSHLDOSRD1600, RHD4PRSHLSTAGRD1600, RHD4CZ4C031SL5200 |  | -115.02d |
|  | 2970 | **RHD4-02-002-C031-(RD)-Precast Interlocking Block Pavers** |  |  |  |  |  |  |
|  | 2968 | **RHD4-02-002-C031-(RD)-Bituminous concrete wearing course including tack coat (RC2)** |  | 2027-06-27 | 2027-06-29 |  |  |  |
| RHD4CZ4C031RD4100 |  | Supply, lay and compaction Asphaltic wearing course including tack Coat (RC2)for Road Network - (RD-C-3/1)-Z4-C031-RD | 2d | 2027-06-27 | 2027-06-29 | RHD4CZ4C031RD5100 |  | -114.02d |
|  | 2973 | **RHD4-02-002-C031-(RD)-Speed Table and Wheel Stopper** |  |  |  |  |  |  |
|  | 2971 | **RHD4-02-002-C031-(RD)-Pavement Marking** |  | 2027-06-29 | 2027-07-05 |  |  |  |
| RHD4CZ4C031RD7100 |  | Pavement Markings for Road Network - (RD-C-3/1)-Z4-C031-RD | 5d | 2027-06-29 | 2027-07-05 | RHD4CZ4C031RD4100, RHD4PRSHLDOSRD1500, RHD4PRSHLSTAGRD1500 |  | -114.02d |
|  | 2789 | **RHD4-02-002-Z4-C031-Storm Network - ST** |  | 2026-08-04 | 2027-04-25 |  |  |  |
|  | 2430 | **RHD4-02-002-C031-(ST)-MH Works - 2000 mm diameter** |  | 2026-10-10 | 2027-02-18 |  |  |  |
| RHD4CZ4C031ST3102 |  | Excavation and PC Blinding works for MH 2000 mm - (RD-C-3/1)-Z4-C031-ST | 2d | 2026-10-10 A | 2026-10-11 A | RHD4CZ4A013ST3100, RHD4CZ5L016ST2500, RHD4CZ6A02ST1500, RHD4CZ5L016ST3501 | 100% |  |
| RHD4CZ4C031ST3202 |  | Installation of Base for MH 2000 mm - (RD-C-3/1)-Z4-C031-ST | 2d | 2026-10-12 A | 2027-02-11 | RHD4CZ4C031ST3102 | 50% | -190.02d |
| RHD4CZ4C031ST3302 |  | MH Ring and C.Slab works and Backfilling works for MH 2000 mm - (RD-C-3/1)-Z4-C031-ST | 2d | 2027-02-11 | 2027-02-14 | RHD4CZ4C031ST3202 |  | -190.02d |
| RHD4CZ4C031ST3402 |  | Steel Cover for MH 2000 mm - (RD-C-3/1)-Z4-C031-ST | 2d | 2027-02-14 | 2027-02-16 | RHD4CZ4C031ST3302 |  | -190.02d |
| RHD4CZ4C031ST3502 |  | Finishing, Benching, Testing works for MH 2000 mm - (RD-C-3/1)-Z4-C031-ST | 2d | 2027-02-16 | 2027-02-18 | RHD4CZ4C031ST3402 |  | -190.02d |
|  | 2427 | **RHD4-02-002-C031-(ST)-UPVC Pipes - 400 mm diameter** |  | 2026-09-21 | 2027-02-28 |  |  |  |
| RHD4CZ4C031ST2101 |  | Excavation works for UPVC Pipe Line 400 mm - (RD-C-3/1)-Z4-C031-ST | 2d | 2026-09-21 A | 2026-09-22 A | RHD4CZ4C031ST3102, RHD4CZ5L016ST8500, RHD4CZ5L07ST8500, RHD4CZ5A014ST8500, RHD4CZ5C051ST8500 | 100% |  |
| RHD4CZ4C031ST2201 |  | Bedding works for UPVC Pipe Line 400 mm - (RD-C-3/1)-Z4-C031-ST | 2d | 2026-10-01 A | 2026-10-03 A | RHD4CZ4C031ST2101 | 100% |  |
| RHD4CZ4C031ST2301 |  | Installing for UPVC Pipe Line 400 mm - (RD-C-3/1)-Z4-C031-ST | 2d | 2027-02-20 | 2027-02-23 | RHD4CZ4C031ST2201 |  | -195.02d |
| RHD4CZ4C031ST2401 |  | Primary Test for UPVC Pipe Line 400 mm - (RD-C-3/1)-Z4-C031-ST | 2d | 2027-02-23 | 2027-02-25 | RHD4CZ4C031ST2301 |  | -195.02d |
| RHD4CZ4C031ST2501 |  | Backfilling and warning tape works for UPVC Pipe Line 400 mm - (RD-C-3/1)-Z4-C031-ST | 2d | 2027-02-25 | 2027-02-28 | RHD4CZ4C031ST3502, RHD4CZ4C031ST2401 |  | -195.02d |
|  | 2420 | **RHD4-02-002-C031-(ST)-GRP Pipes - 1200 mm diameter** |  | 2027-02-20 | 2027-03-04 |  |  |  |
| RHD4CZ4C031ST1108 |  | Excavation works for GRP Pipe Line 1200 mm - (RD-C-3/1)-Z4-C031-ST | 2d | 2027-02-20 | 2027-02-23 | RHD4CZ4C031ST2101, RHD4CZ5L08ST3502 |  | -197.02d |
| RHD4CZ4C031ST1208 |  | Bedding works for GRP Pipe Line 1200 mm - (RD-C-3/1)-Z4-C031-ST | 2d | 2027-02-23 | 2027-02-25 | RHD4CZ4C031ST1108 |  | -197.02d |
| RHD4CZ4C031ST1308 |  | Installing for GRP Pipe Line 1200 mm - (RD-C-3/1)-Z4-C031-ST | 2d | 2027-02-25 | 2027-02-28 | RHD4CZ4C031ST1208 |  | -197.02d |
| RHD4CZ4C031ST1408 |  | Primary Test for GRP Pipe Line 1200 mm - (RD-C-3/1)-Z4-C031-ST | 2d | 2027-02-28 | 2027-03-02 | RHD4CZ4C031ST1308 |  | -197.02d |
| RHD4CZ4C031ST1508 |  | Backfilling and warning tape works for GRP Pipe Line 1200 mm - (RD-C-3/1)-Z4-C031-ST | 2d | 2027-03-02 | 2027-03-04 | RHD4CZ4C031ST2501, RHD4CZ5L07ST2500, RHD4CZ4C031ST1408 |  | -197.02d |
|  | 2415 | **RHD4-02-002-C031-(ST)-GRP Pipes - 700 mm diameter** |  | 2026-09-19 | 2027-02-25 |  |  |  |
| RHD4CZ4C031ST1103 |  | Excavation works for GRP Pipe Line 700 mm - (RD-C-3/1)-Z4-C031-ST | 2d | 2026-09-19 A | 2026-09-20 A | RHD4CZ4C031ST1108 | 100% |  |
| RHD4CZ4C031ST1203 |  | Bedding works for GRP Pipe Line 700 mm - (RD-C-3/1)-Z4-C031-ST | 2d | 2026-10-22 A | 2026-10-24 A | RHD4CZ4C031ST1103 | 100% |  |
| RHD4CZ4C031ST1303 |  | Installing for GRP Pipe Line 700 mm - (RD-C-3/1)-Z4-C031-ST | 2d | 2026-10-24 A | 2026-10-25 A | RHD4CZ4C031ST1203 | 100% |  |
| RHD4CZ4C031ST1503 |  | Backfilling and warning tape works for GRP Pipe Line 700 mm - (RD-C-3/1)-Z4-C031-ST | 2d | 2026-10-26 A | 2026-10-27 A | RHD4CZ4C031ST1508, RHD4CZ4C031ST1403 | 100% |  |
| RHD4CZ4C031ST1403 |  | Primary Test for GRP Pipe Line 700 mm - (RD-C-3/1)-Z4-C031-ST | 2d | 2027-02-23 | 2027-02-25 | RHD4CZ4C031ST1303 |  | -191.02d |
|  | 2414 | **RHD4-02-002-C031-(ST)-GRP Pipes - 600 mm diameter** |  | 2026-08-04 | 2027-03-13 |  |  |  |
| RHD4CZ4C031ST1102 |  | Excavation works for GRP Pipe Line 600 mm - (RD-C-3/1)-Z4-C031-ST | 2d | 2026-08-04 A | 2026-09-19 A | RHD4CZ4C031ST1503, RHD4CZ4C031ST1103 | 100% |  |
| RHD4CZ4C031ST1202 |  | Bedding works for GRP Pipe Line 600 mm - (RD-C-3/1)-Z4-C031-ST | 2d | 2026-08-05 A | 2026-09-20 A | RHD4CZ4C031ST1102 | 100% |  |
| RHD4CZ4C031ST1302 |  | Installing for GRP Pipe Line 600 mm - (RD-C-3/1)-Z4-C031-ST | 2d | 2026-08-06 A | 2026-08-13 A | RHD4CZ4C031ST1202 | 100% |  |
| RHD4CZ4C031ST1502 |  | Backfilling and warning tape works for GRP Pipe Line 600 mm - (RD-C-3/1)-Z4-C031-ST | 2d | 2026-08-08 A | 2027-03-13 | RHD4CZ4C031ST1503, RHD4CZ4C031ST1402 |  | -197.02d |
| RHD4CZ4C031ST1402 |  | Primary Test for GRP Pipe Line 600 mm - (RD-C-3/1)-Z4-C031-ST | 2d | 2027-03-04 | 2027-03-07 | RHD4CZ4C031ST1302 |  | -197.02d |
|  | 2413 | **RHD4-02-002-C031-(ST)-GRP Pipes - 500 mm diameter** |  | 2026-08-04 | 2027-03-17 |  |  |  |
| RHD4CZ4C031ST1101 |  | Excavation works for GRP Pipe Line 500 mm - (RD-C-3/1)-Z4-C031-ST | 2d | 2026-08-04 A | 2027-03-13 | RHD4CZ4C031ST1502, RHD4CZ4C031ST1102 | 65% | -197.02d |
| RHD4CZ4C031ST1201 |  | Bedding works for GRP Pipe Line 500 mm - (RD-C-3/1)-Z4-C031-ST | 2d | 2026-08-05 A | 2027-03-13 | RHD4CZ4C031ST1101 | 75% | -197.02d |
| RHD4CZ4C031ST1301 |  | Installing for GRP Pipe Line 500 mm - (RD-C-3/1)-Z4-C031-ST | 2d | 2026-08-06 A | 2027-03-13 | RHD4CZ4C031ST1201 | 76% | -197.02d |
| RHD4CZ4C031ST1501 |  | Backfilling and warning tape works for GRP Pipe Line 500 mm - (RD-C-3/1)-Z4-C031-ST | 2d | 2026-08-08 A | 2027-03-17 | RHD4CZ4C031ST1502, RHD4CZ4C031ST1401 | 75% | -197.02d |
| RHD4CZ4C031ST1401 |  | Primary Test for GRP Pipe Line 500 mm - (RD-C-3/1)-Z4-C031-ST | 2d | 2027-03-13 | 2027-03-15 | RHD4CZ4C031ST1301 |  | -197.02d |
|  | 2806 | **RHD4-02-002-C031-(ST)-MH Works - 1200 mm diameter** |  | 2026-08-04 | 2027-04-13 |  |  |  |
| RHD4CZ4C031ST3100 |  | Excavation and PC Blinding works for MH 1200 mm - (RD-C-3/1)-Z4-C031-ST | 7d | 2026-08-04 A | 2027-03-21 | RHD4ENSDZ4APPST110, RHD4ENMSST2000, RHD4CZ4C031ST1501, RHD4ENMSST2010, RHD4CZ6C062ST3502, RHD4ENMSEW2000, RHD4ENMSEW2010, RHD4ENSDZ5APPEW100 SS, RHD4ENSDZ7APPRD220, RHD4ENSDZ7APPEW100 SS, RHD4CZ7L015RW3000, RHD4ENSDZ5APPRD220, RHD4CZ5L08RD1100, RHD4CZ4C031ST3302 | 79% | -197.02d |
| RHD4CZ4C031ST3200 |  | Installation of Base for MH 1200 mm - (RD-C-3/1)-Z4-C031-ST | 7d | 2026-09-13 A | 2027-03-24 | RHD4CZ4C031ST3100, RHD4PRSHLSTAGST1603 | 79% | -170.02d |
| RHD4CZ4C031ST3300 |  | MH Ring and C.Slab works and Backfilling works for MH 1200 mm - (RD-C-3/1)-Z4-C031-ST | 7d | 2026-10-24 A | 2027-03-28 | RHD4CZ4C031ST3200, RHD4PRSHLDOSST1603, RHD4CZ5L07ST3500 | 16% | -170.02d |
| RHD4CZ4C031ST3400 |  | Steel Cover for MH 1200 mm - (RD-C-3/1)-Z4-C031-ST | 7d | 2027-03-28 | 2027-04-05 | RHD4CZ4C031ST3300 |  | -133.02d |
| RHD4CZ4C031ST3500 |  | Finishing, Benching, Testing works for MH 1200 mm - (RD-C-3/1)-Z4-C031-ST | 7d | 2027-04-05 | 2027-04-13 | RHD4CZ4C031ST3400 |  | -133.02d |
|  | 2807 | **RHD4-02-002-C031-(ST)-MH Works - 1500 mm diameter** |  | 2026-09-19 | 2027-04-25 |  |  |  |
| RHD4CZ4C031ST3101 |  | Excavation and PC Blinding works for MH 1500 mm - (RD-C-3/1)-Z4-C031-ST | 2d | 2026-09-19 A | 2027-03-30 | RHD4CZ4C031ST3300, RHD4ENSDZ4APPST110, RHD4ENMSST2000 | 25% | -170.02d |
| RHD4CZ4C031ST3201 |  | Installation of Base for MH 1500 mm - (RD-C-3/1)-Z4-C031-ST | 2d | 2026-09-21 A | 2027-04-01 | RHD4CZ4C031ST3101, RHD4PRSHLSTAGST1603 | 25% | -170.02d |
| RHD4CZ4C031ST3301 |  | MH Ring and C.Slab works and Backfilling works for MH 1500 mm - (RD-C-3/1)-Z4-C031-ST | 2d | 2027-04-01 | 2027-04-04 | RHD4CZ4C031ST3201, RHD4PRSHLDOSST1603 |  | -170.02d |
| RHD4CZ4C031ST3401 |  | Steel Cover for MH 1500 mm - (RD-C-3/1)-Z4-C031-ST | 2d | 2027-04-20 | 2027-04-22 | RHD4CZ4C031ST3301, RHD4CZ4C031ST3400 SS, RHD4CZ4C031ST1500, RHD4PRSHLDOSST1703, RHD4PRSHLSTAGST1703 SS |  | -148.02d |
| RHD4CZ4C031ST3501 |  | Finishing, Benching, Testing works for MH 1500 mm - (RD-C-3/1)-Z4-C031-ST | 2d | 2027-04-22 | 2027-04-25 | RHD4CZ4C031ST3401, RHD4CZ4C031ST3500 SS, RHD4CZ4C031ST2500 |  | -148.02d |
|  | 2795 | **RHD4-02-002-C031-(ST)-GRP Pipes - 900 mm diameter** |  | 2027-04-04 | 2027-04-15 |  |  |  |

| ID | WBS | Task | Duration | Start | Finish | Predecessors | Complete | Total float |
| --- | --- | --- | --- | --- | --- | --- | --- | --- |
| RHD4CZ4C031ST1105 |  | Excavation works for GRP Pipe Line 900 mm - (RD-C-3/1)-Z4-C031-ST | 2d | 2027-04-04 | 2027-04-06 | RHD4CZ4C031ST3300, RHD4CZ4C031ST3301, RHD4ENSDZ4APPST110, RHD4CZ5L07ST8500, RHD4CZ5C061ST7500, RHD4CZ4C031ST1501 |  | -169.02d |
| RHD4CZ4C031ST1205 |  | Bedding works for GRP Pipe Line 900 mm - (RD-C-3/1)-Z4-C031-ST | 2d | 2027-04-06 | 2027-04-08 | RHD4CZ4C031ST1105 |  | -169.02d |
| RHD4CZ4C031ST1305 |  | Installing for GRP Pipe Line 900 mm - (RD-C-3/1)-Z4-C031-ST | 2d | 2027-04-08 | 2027-04-11 | RHD4CZ4C031ST1205, RHD4PRSHLSTAGST1003, RHD4PRSHLDOSST1603, RHD4PRSHLPOST1000, RHD4PRSHLDOSST1003 |  | -169.02d |
| RHD4CZ4C031ST1405 |  | Primary Test for GRP Pipe Line 900 mm - (RD-C-3/1)-Z4-C031-ST | 2d | 2027-04-11 | 2027-04-13 | RHD4CZ4C031ST1305 |  | -168.02d |
| RHD4CZ4C031ST1505 |  | Backfilling and warning tape works for GRP Pipe Line 900 mm - (RD-C-3/1)-Z4-C031-ST | 2d | 2027-04-13 | 2027-04-15 | RHD4CZ4C031ST1405 |  | -167.02d |
|  | 2790 | **RHD4-02-002-C031-(ST)-GRP Pipes - 400 mm diameter** |  | 2026-08-04 | 2027-04-20 |  |  |  |
| RHD4CZ4C031ST1100 |  | Excavation works for GRP Pipe Line 400 mm - (RD-C-3/1)-Z4-C031-ST | 4d | 2026-08-04 A | 2027-04-08 | RHD4CZ4C031ST3300, RHD4CZ4C031ST3301, RHD4CZ4C031ST1105, RHD4ENSDZ4APPST110 | 50% | -168.02d |
| RHD4CZ4C031ST1200 |  | Bedding works for GRP Pipe Line 400 mm - (RD-C-3/1)-Z4-C031-ST | 3d | 2026-08-05 A | 2027-04-10 | RHD4CZ4C031ST1100, RHD4CZ4C031ST1205 | 59% | -168.02d |
| RHD4CZ4C031ST1300 |  | Installing for GRP Pipe Line 400 mm - (RD-C-3/1)-Z4-C031-ST | 5d | 2026-08-06 A | 2027-04-14 | RHD4CZ4C031ST1200, RHD4CZ4C031ST1305, RHD4PRSHLSTAGST1003, RHD4PRSHLDOSST1603, RHD4PRSHLPOST1000, RHD4PRSHLDOSST1003 | 62% | -169.02d |
| RHD4CZ4C031ST1500 |  | Backfilling and warning tape works for GRP Pipe Line 400 mm - (RD-C-3/1)-Z4-C031-ST | 7d | 2026-08-08 A | 2027-04-20 | RHD4CZ4C031ST1400, RHD4CZ4C031ST1505 | 59% | -169.02d |
| RHD4CZ4C031ST1400 |  | Primary Test for GRP Pipe Line 400 mm - (RD-C-3/1)-Z4-C031-ST | 3d | 2027-04-14 | 2027-04-18 | RHD4CZ4C031ST1300, RHD4CZ4C031ST1405 |  | -169.02d |
|  | 2804 | **RHD4-02-002-C031-(ST)-UPVC Pipes - 300 mm diameter** |  | 2026-09-19 | 2027-04-21 |  |  |  |
| RHD4CZ4C031ST2100 |  | Excavation works for UPVC Pipe Line 300 mm - (RD-C-3/1)-Z4-C031-ST | 4d | 2026-09-19 A | 2027-04-10 | RHD4CZ4C031ST3300, RHD4CZ4C031ST3301, RHD4ENSDZ4APPST110 | 90% | -168.02d |
| RHD4CZ4C031ST2200 |  | Bedding works for UPVC Pipe Line 300 mm - (RD-C-3/1)-Z4-C031-ST | 3d | 2026-09-21 A | 2027-04-12 | RHD4CZ4C031ST2100 | 93% | -168.02d |
| RHD4CZ4C031ST2300 |  | Installing for UPVC Pipe Line 300 mm - (RD-C-3/1)-Z4-C031-ST | 4d | 2026-09-22 A | 2027-04-17 | RHD4CZ4C031ST2200, RHD4CZ4C031ST7300, RHD4PRSHLDOSST1103, RHD4PRSHLSTAGST1103 | 94% | -170.02d |
| RHD4CZ4C031ST2500 |  | Backfilling and warning tape works for UPVC Pipe Line 300 mm - (RD-C-3/1)-Z4-C031-ST | 5d | 2026-09-23 A | 2027-04-21 | RHD4CZ4C031ST2400, RHD4CZ4C031ST6100 | 93% | -170.02d |
| RHD4CZ4C031ST2400 |  | Primary Test for UPVC Pipe Line 300 mm - (RD-C-3/1)-Z4-C031-ST | 2d | 2027-04-17 | 2027-04-19 | RHD4CZ4C031ST2300 |  | -170.02d |
|  | 2812 | **RHD4-02-002-C031-(ST)-Concrete Encasement** |  | 2027-04-14 | 2027-04-19 |  |  |  |
| RHD4CZ4C031ST6100 |  | Pipe Encasement for Storm Pipelines - (RD-C-3/1)-Z4-C031-ST | 4d | 2027-04-14 | 2027-04-19 | RHD4CZ4C031ST2300 SS, RHD4CZ4C031ST2300 FF, RHD4CZ4C031ST2200 |  | -170.02d |
|  | 2813 | **RHD4-02-002-Z4-C031-Catch Basin - ST** |  | 2026-08-29 | 2027-04-28 |  |  |  |
|  | 2437 | **RHD4-02-002-C031-(ST)-Double Catch Basin Works** |  | 2026-09-19 | 2027-04-15 |  |  |  |
| RHD4CZ4C031ST8100 |  | Excavation works for Double Catch Basin - (RD-C-3/1)-Z4-C031-ST | 2d | 2026-09-19 A | 2026-10-24 A | RHD4CZ4C031ST1100 | 100% |  |
| RHD4CZ4C031ST8200 |  | PC Blinding, Installation and Pipe connection for Double Catch Basin - (RD-C-3/1)-Z4-C031-ST | 2d | 2026-10-25 A | 2026-10-26 A | RHD4CZ4C031ST8100 | 100% |  |
| RHD4CZ4C031ST8300 |  | Rings & C.Slab & Final Backfillfor Double Catch Basin - (RD-C-3/1)-Z4-C031-ST | 2d | 2027-04-08 | 2027-04-11 | RHD4CZ4C031ST8200 |  | -162.02d |
| RHD4CZ4C031ST8400 |  | Steel Cover for Double Catch Basin - (RD-C-3/1)-Z4-C031-ST | 2d | 2027-04-11 | 2027-04-13 | RHD4CZ4C031ST8300 |  | -162.02d |
| RHD4CZ4C031ST8500 |  | Finishing and Insulation works for Double Catch Basin - (RD-C-3/1)-Z4-C031-ST | 2d | 2027-04-13 | 2027-04-15 | RHD4CZ4C031ST8400 |  | -162.02d |
|  | 2814 | **RHD4-02-002-C031-(ST)-Single Catch Basin Works** |  | 2026-08-29 | 2027-04-28 |  |  |  |
| RHD4CZ4C031ST7100 |  | Excavation works for Single Catch Basin - (RD-C-3/1)-Z4-C031-ST | 4d | 2026-08-29 A | 2027-04-06 | RHD4CZ4C031ST3300, RHD4CZ4C031ST3301, RHD4ENSDZ4APPST110 | 62% | -170.02d |
| RHD4CZ4C031ST7200 |  | PC Blinding, Installation and Pipe connection for Single Catch Basin - (RD-C-3/1)-Z4-C031-ST | 4d | 2026-08-30 A | 2027-04-08 | RHD4CZ4C031ST7100 | 64% | -170.02d |
| RHD4CZ4C031ST7300 |  | Rings & C.Slab & Final Backfill for Single Catch Basin - (RD-C-3/1)-Z4-C031-ST | 5d | 2026-10-27 A | 2027-04-14 | RHD4CZ4C031ST7200, RHD4PRSHLDOSST1303, RHD4PRSHLSTAGST1303 |  | -170.02d |
| RHD4CZ4C031ST7400 |  | Steel Cover for Single Catch Basin - (RD-C-3/1)-Z4-C031-ST | 4d | 2027-04-14 | 2027-04-19 | RHD4CZ4C031ST7300, RHD4PRSHLDOSST1703 |  | -150.02d |
| RHD4CZ4C031ST7500 |  | Finishing and Insulation works for Single Catch Basin - (RD-C-3/1)-Z4-C031-ST | 8d | 2027-04-19 | 2027-04-28 | RHD4CZ4C031ST7400 |  | -150.02d |
|  | 2875 | **RHD4-02-002-Z4-C031-Potable Network - PT** |  | 2027-04-21 | 2027-05-19 |  |  |  |
|  | 2879 | **RHD4-02-002-C031-(PT)-HDPE Pipes - 400 mm diameter** |  | 2027-04-21 | 2027-05-03 |  |  |  |
| RHD4CZ4C031PT1103 |  | Excavation works for HDPE Pipline 400 mm - (RD-C-3/1)-Z4-C031-PT | 2d | 2027-04-21 | 2027-04-24 | RHD4ENSDZ4APPPT130, RHD4ENMSPT2000, RHD4CZ4C031ST2500, RHD4CZ4C031ST1500 |  | -170.02d |
| RHD4CZ4C031PT1203 |  | Bedding works for HDPE Pipline 400 mm - (RD-C-3/1)-Z4-C031-PT | 2d | 2027-04-24 | 2027-04-26 | RHD4CZ4C031PT1103 |  | -170.02d |
| RHD4CZ4C031PT1303 |  | Installing for HDPE Pipline 400 mm - (RD-C-3/1)-Z4-C031-PT | 2d | 2027-04-26 | 2027-04-28 | RHD4CZ4C031PT1203, RHD4PRSHLDOSPT1000, RHD4PRSHLSTAGPT1000 |  | -170.02d |
| RHD4CZ4C031PT1403 |  | Primary Test for HDPE Pipline 400 mm - (RD-C-3/1)-Z4-C031-PT | 2d | 2027-04-28 | 2027-05-01 | RHD4CZ4C031PT1303 |  | -170.02d |
| RHD4CZ4C031PT1503 |  | Backfilling and warning tape works for HDPE Pipline 400 mm - (RD-C-3/1)-Z4-C031-PT | 2d | 2027-05-01 | 2027-05-03 | RHD4CZ4C031PT1403 |  | -170.02d |
|  | 1751 | **RHD4-02-002-C031-(PT)-Air Valve Chambers** |  | 2027-04-24 | 2027-05-03 |  |  |  |
| RHD4CZ4C031PT2102 |  | Excavation and Bedding for Air Valve Chambers for Potable Water Network - (RD-C-3/1)-Z4-C031-PT | 2d | 2027-04-24 | 2027-04-26 | RHD4CZ4C031PT1103 |  | -139.02d |
| RHD4CZ4C031PT2202 |  | PC works for Air Valve Chambers for Potable Water Network - (RD-C-3/1)-Z4-C031-PT | 2d | 2027-04-26 | 2027-04-28 | RHD4CZ4C031PT2102 |  | -139.02d |
| RHD4CZ4C031PT2302 |  | Installation for Air Valve Chambers for Potable Water Network - (RD-C-3/1)-Z4-C031-PT | 2d | 2027-04-28 | 2027-05-01 | RHD4CZ4C031PT2202 |  | -139.02d |
| RHD4CZ4C031PT2402 |  | Backfilling works for Air Valve Chambers for Potable Water Network - (RD-C-3/1)-Z4-C031-PT | 2d | 2027-05-01 | 2027-05-03 | RHD4CZ4C031PT2302 |  | -139.02d |
|  | 1752 | **RHD4-02-002-C031-(PT)-Air Valves** |  | 2027-05-01 | 2027-05-05 |  |  |  |
| RHD4CZ4C031PT3103 |  | Installation for Air Valves for Potable Water Network - (RD-C-3/1)-Z4-C031-PT | 2d | 2027-05-01 | 2027-05-03 | RHD4CZ4C031PT2302 |  | -139.02d |
| RHD4CZ4C031PT3203 |  | Stem and Service box for Air Valves for Potable Water Network - (RD-C-3/1)-Z4-C031-PT | 2d | 2027-05-03 | 2027-05-05 | RHD4CZ4C031PT3103, RHD4CZ4C031PT2402 |  | -139.02d |
|  | 2883 | **RHD4-02-002-C031-(PT)-Butterfly Valves** |  | 2027-05-03 | 2027-05-08 |  |  |  |
| RHD4CZ4C031PT3101 |  | Installation for Butterfly Valves for Potable Water Network - (RD-C-3/1)-Z4-C031-PT | 2d | 2027-05-03 | 2027-05-05 | RHD4CZ4C031PT2300, RHD4PRSHLDOSPT1200, RHD4PRSHLSTAGPT1200 |  | -129.02d |
| RHD4CZ4C031PT3201 |  | Stem and Service box for Butterfly Valves for Potable Water Network - (RD-C-3/1)-Z4-C031-PT | 2d | 2027-05-05 | 2027-05-08 | RHD4CZ4C031PT3101, RHD4CZ4C031PT2400, RHD4PRSHLDOSPT1300, RHD4PRSHLSTAGPT1300, RHD4CZ4A013PT3203, RHD4CZ4A013PT3202, RHD4CZ4A013PT3201 |  | -129.02d |
|  | 2888 | **RHD4-02-002-C031-(PT)-Fire Hydrant** |  | 2027-05-03 | 2027-05-19 |  |  |  |
| RHD4CZ4C031PT4100 |  | Excavation and Bedding and Pipe Installation for Fire Hydrant - (RD-C-3/1)-Z4-C031-PT | 2d | 2027-05-03 | 2027-05-05 | RHD4CZ4C031PT1503, RHD4ENSDZ4APPPT130 |  | -138.02d |
| RHD4CZ4C031PT4200 |  | Valve Installation for Fire Hydrant - (RD-C-3/1)-Z4-C031-PT | 2d | 2027-05-05 | 2027-05-08 | RHD4CZ4C031PT4100 |  | -138.02d |
| RHD4CZ4C031PT4300 |  | Stem for Fire Hydrant - (RD-C-3/1)-Z4-C031-PT | 2d | 2027-05-08 | 2027-05-10 | RHD4CZ4C031PT4200 |  | -138.02d |
| RHD4CZ4C031PT4400 |  | Fire Installation for Fire Hydrant - (RD-C-3/1)-Z4-C031-PT | 2d | 2027-05-10 | 2027-05-12 | RHD4CZ4C031PT4300, RHD4PRSHLDOSPT1500, RHD4PRSHLSTAGPT1500 |  | -138.02d |
| RHD4CZ4C031PT4500 |  | Protection Barriers for Fire Hydrant - (RD-C-3/1)-Z4-C031-PT | 2d | 2027-05-12 | 2027-05-19 | RHD4CZ4C031PT4400 |  | -138.02d |
|  | 2889 | **RHD4-02-002-C031-(PT)-Concrete Encasement** |  |  |  |  |  |  |
|  | 2882 | **RHD4-02-002-C031-(PT)-Butterfly Valve Chamber** |  | 2027-04-26 | 2027-05-05 |  |  |  |
| RHD4CZ4C031PT2100 |  | Excavation and Bedding for Butterfly Valve Chamber for Potable Water Network - (RD-C-3/1)-Z4-C031-PT | 2d | 2027-04-26 | 2027-04-28 | RHD4ENSDZ4APPPT130, RHD4CZ4C031PT2102 |  | -139.02d |
| RHD4CZ4C031PT2200 |  | PC works for Butterfly Valve Chamber for Potable Water Network - (RD-C-3/1)-Z4-C031-PT | 2d | 2027-04-28 | 2027-05-01 | RHD4CZ4C031PT2100 |  | -139.02d |
| RHD4CZ4C031PT2300 |  | Installation for Butterfly Valve Chamber for Potable Water Network - (RD-C-3/1)-Z4-C031-PT | 2d | 2027-05-01 | 2027-05-03 | RHD4CZ4C031PT2200, RHD4PRSHLDOSPT1100, RHD4PRSHLDOSPT1400, RHD4PRSHLSTAGPT1100, RHD4PRSHLSTAGPT1400 |  | -139.02d |
| RHD4CZ4C031PT2400 |  | Backfilling works for Butterfly Valve Chamber for Potable Water Network - (RD-C-3/1)-Z4-C031-PT | 2d | 2027-05-03 | 2027-05-05 | RHD4CZ4C031PT2300 |  | -139.02d |
|  | 2924 | **RHD4-02-002-Z4-C031-Medium Voltage Network - MV** |  | 2027-04-19 | 2027-05-03 |  |  |  |
|  | 2925 | **RHD4-02-002-C031-(MV)-Medium Voltage cable trench** |  | 2027-04-19 | 2027-05-01 |  |  |  |
| RHD4CZ4C031MV1100 |  | Excavation for Medium Voltage Trench - (RD-C-3/1)-Z4-C031-MV | 8d | 2027-04-19 | 2027-04-28 | RHD4ENSDZ4APPMV150, RHD4CZ4C031ST6100, RHD4CZ4C031RD3100 |  | -154.02d |
| RHD4CZ4C031MV1200 |  | Trench Backfilling for Medium Voltage Network - (RD-C-3/1)-Z4-C031-MV | 2d | 2027-04-28 | 2027-05-01 | RHD4CZ4C031MV1100 |  | -153.02d |
|  | 2926 | **RHD4-02-002-C031-(MV)-Medium Voltage duct banks** |  | 2027-04-19 | 2027-04-29 |  |  |  |
| RHD4CZ4C031MV2100 |  | Excavation of Duct Banks for Medium Voltage Network - (RD-C-3/1)-Z4-C031-MV | 2d | 2027-04-19 | 2027-04-21 | RHD4ENSDZ4APPMV150, RHD4CZ4C031MV1100 SS |  | -154.02d |
| RHD4CZ4C031MV2200 |  | Installation of Duct Banks for Medium Voltage Network - (RD-C-3/1)-Z4-C031-MV | 3d | 2027-04-21 | 2027-04-25 | RHD4CZ4C031MV2100, RHD4PRSHLDOSMV1000, RHD4PRSHLSTAGMV1000 |  | -125.02d |
| RHD4CZ4C031MV2300 |  | Pouring of Duct Banks for Medium Voltage Network - (RD-C-3/1)-Z4-C031-MV | 2d | 2027-04-25 | 2027-04-27 | RHD4CZ4C031MV2200 |  | -125.02d |

| ID | WBS | Task | Duration | Start | Finish | Predecessors | Total float |
| --- | --- | --- | --- | --- | --- | --- | --- |
| RHD4CZ4C031MV2400 |  | Backfilling of Duct Banks for Medium Voltage Network - (RD-C-3/1)-Z4-C031-MV | 2d | 2027-04-27 | 2027-04-29 | RHD4CZ4C031MV2300 | -125.02d |
|  | 2927 | **RHD4-02-002-C031-(MV)-Medium Voltage cables 3Cx 500 mm²** |  | 2027-04-28 | 2027-05-03 |  |  |
| RHD4CZ4C031MV3100 |  | Installation of Medium Voltage Cables 3Cx 500 mm² - (RD-C-3/1)-Z4-C031-MV | 4d | 2027-04-28 | 2027-05-03 | RHD4CZ4C031MV1100, RHD4PRSHLDOSMV1100, RHD4ENMSMV2000, RHD4ENMSMV2010, RHD4PRSHLSTAGMV1100, RHD4CZ4C031ST1501 | -151.02d |
| RHD4CZ4C031MV3300 |  | Testing of Medium Voltage Cables 3Cx 500 mm² - (RD-C-3/1)-Z4-C031-MV | 2d | 2027-05-01 | 2027-05-03 | RHD4CZ4C031MV1200 | -147.02d |
|  | 1982 | **RHD4-02-002-C031-(MV)-Medium Voltage cables 3Cx 50 mm²** |  |  |  |  |  |
|  | 2931 | **RHD4-02-002-Z4-C031-Low Voltage Network - LV** |  | 2027-05-03 | 2027-05-12 |  |  |
|  | 2932 | **RHD4-02-002-C031-(LV)-Low Voltage duct banks** |  |  |  |  |  |
|  | 2934 | **RHD4-02-002-C031-(LV)-Low Voltage cables** |  | 2027-05-03 | 2027-05-12 |  |  |
| RHD4CZ4C031LV3100 |  | Excavation for Low Voltage Cables for Low Voltage Network - (RD-C-3/1)-Z4-C031-LV | 2d | 2027-05-03 | 2027-05-05 | RHD4CZ4C031PT1503, RHD4ENSDZ4APPLV160, RHD4CZ4C031MV1100 | -149.02d |
| RHD4CZ4C031LV3200 |  | Cable Laying of Low Voltage Cables for Low Voltage Network - (RD-C-3/1)-Z4-C031-LV | 2d | 2027-05-05 | 2027-05-08 | RHD4CZ4C031LV3100, RHD4PRSHLDOSLV1100, RHD4ENMSLV2000, RHD4ENMSLV2010, RHD4PRSHLSTAGLV1100 | -149.02d |
| RHD4CZ4C031LV3300 |  | Warning tape and Backfill for Low Voltage Cables for Low Voltage Network - (RD-C-3/1)-Z4-C031-LV | 2d | 2027-05-08 | 2027-05-10 | RHD4CZ4C031LV3200 | -149.02d |
| RHD4CZ4C031LV3400 |  | Testing of Low Voltage Cables for Low Voltage Network - (RD-C-3/1)-Z4-C031-LV | 2d | 2027-05-10 | 2027-05-12 | RHD4CZ4C031LV3300 | -149.02d |
|  | 2937 | **RHD4-02-002-Z4-C031-Street Lighting Network - SL** |  | 2027-04-21 | 2027-05-24 |  |  |
|  | 2938 | **RHD4-02-002-C031-(SL)-Street Lighting duct banks** |  | 2027-04-21 | 2027-05-02 |  |  |
| RHD4CZ4C031SL2100 |  | Excavation of Duct Banks for Street Lighting Network - (RD-C-3/1)-Z4-C031-SL | 2d | 2027-04-21 | 2027-04-24 | RHD4ENSDZ4APPSL170, RHD4CZ4C031MV2100 | -154.02d |
| RHD4CZ4C031SL2200 |  | Installation of Duct Banks for Street Lighting Network - (RD-C-3/1)-Z4-C031-SL | 3d | 2027-04-24 | 2027-04-27 | RHD4CZ4C031SL2100, RHD4PRSHLDOSSL1000, RHD4PRSHLSTAGSL1000 | -154.02d |
| RHD4CZ4C031SL2300 |  | Pouring of Duct Banks for Street Lighting Network - (RD-C-3/1)-Z4-C031-SL | 2d | 2027-04-27 | 2027-04-29 | RHD4CZ4C031SL2200 | -154.02d |
| RHD4CZ4C031SL2400 |  | Backfilling of Duct Banks for Street Lighting Network - (RD-C-3/1)-Z4-C031-SL | 2d | 2027-04-29 | 2027-05-02 | RHD4CZ4C031SL2300 | -154.02d |
|  | 2939 | **RHD4-02-002-C031-(SL)-Street Lighting Drawpit** |  | 2027-05-04 | 2027-05-09 |  |  |
| RHD4CZ4C031SL5100 |  | Excavation of Drawpit size 600x600x900mm for Street Lighting Network - (RD-C-3/1)-Z4-C031-SL | 2d | 2027-05-04 | 2027-05-06 | RHD4CZ4C031SL2300, RHD4ENSDZ4APPSL170, RHD4CZ4C031SL1100 | -154.02d |
| RHD4CZ4C031SL5200 |  | Installation of Drawpit size 600x600x900mm for Street Lighting Network - (RD-C-3/1)-Z4-C031-SL | 2d | 2027-05-06 | 2027-05-09 | RHD4CZ4C031SL5100, RHD4PRSHLDOSSL1400, RHD4PRSHLSTAGSL1400, RHD4CZ4C031MV3100 | -154.02d |
|  | 2940 | **RHD4-02-002-C031-(SL)-Street Lighting cables** |  | 2027-05-03 | 2027-05-19 |  |  |
| RHD4CZ4C031SL3100 |  | Excavation for Street Lighting Cables for Street Lighting Network - (RD-C-3/1)-Z4-C031-SL | 2d | 2027-05-03 | 2027-05-05 | RHD4ENSDZ4APPSL170, RHD4CZ4C031MV3300 | -147.02d |
| RHD4CZ4C031SL3200 |  | Cable Laying of Street Lighting Cables for Street Lighting Network - (RD-C-3/1)-Z4-C031-SL | 2d | 2027-05-05 | 2027-05-08 | RHD4CZ4C031SL3100, RHD4PRSHLDOSSL1100, RHD4ENMSSL2000, RHD4ENMSSL2010, RHD4PRSHLSTAGSL1100 | -147.02d |
| RHD4CZ4C031SL3300 |  | Warning tape and Backfill for Street Lighting Cables for Street Lighting Network - (RD-C-3/1)-Z4-C031-SL | 2d | 2027-05-08 | 2027-05-10 | RHD4CZ4C031SL3200 | -147.02d |
| RHD4CZ4C031SL3400 |  | Testing of Street Lighting Cables for Street Lighting Network - (RD-C-3/1)-Z4-C031-SL | 2d | 2027-05-12 | 2027-05-19 | RHD4CZ4C031SL3300, RHD4CZ4C031LV3400 | -149.02d |
|  | 2941 | **RHD4-02-002-C031-(SL)-Street Lighting Poles** |  | 2027-05-02 | 2027-05-24 |  |  |
| RHD4CZ4C031SL1100 |  | Excavation for RC Base for Lighting Poles for Street Lighting Network - (RD-C-3/1)-Z4-C031-SL | 2d | 2027-05-02 | 2027-05-04 | RHD4CZ4C031SL2400, RHD4CZ4C031MV1200, RHD4ENSDZ4APPSL170 | -154.02d |
| RHD4CZ4C031SL1200 |  | Installation for RC Base for Lighting Poles for Street Lighting Network - (RD-C-3/1)-Z4-C031-SL | 2d | 2027-05-04 | 2027-05-06 | RHD4CZ4C031SL1100 | -144.02d |
| RHD4CZ4C031SL1300 |  | Backfill for RC Base for Lighting Poles for Street Lighting Network - (RD-C-3/1)-Z4-C031-SL | 2d | 2027-05-06 | 2027-05-09 | RHD4CZ4C031SL1200 | -144.02d |
| RHD4CZ4C031SL1400 |  | Installation for Lighting Poles for Street Lighting Network - (RD-C-3/1)-Z4-C031-SL | 2d | 2027-05-19 | 2027-05-22 | RHD4CZ4C031SL1300, RHD4CZ4C031SL3400, RHD4PRSHLDOSSL1200, RHD4ENMSSL2000, RHD4ENMSSL2010, RHD4PRSHLSTAGSL1200 | -149.02d |
| RHD4CZ4C031SL1500 |  | Luminaire Installation for Lighting Poles for Street Lighting Network - (RD-C-3/1)-Z4-C031-SL | 2d | 2027-05-22 | 2027-05-24 | RHD4CZ4C031SL1400, RHD4PRSHLDOSSL1300, RHD4PRSHLSTAGSL1300 | -149.02d |
|  | 2942 | **RHD4-02-002-C031-(SL)-Street Lighting Feeder Pillars** |  |  |  |  |  |
|  | 2943 | **RHD4-02-002-C031-(SL)-Street Lighting Earthing System** |  | 2027-05-22 | 2027-05-24 |  |  |
| RHD4CZ4C031SL6100 |  | Installation of Earthing for Lighting Poles and Fedder Pillers for Street Lighting Network - (RD-C-3/1)-Z4-C031-SL | 2d | 2027-05-22 | 2027-05-24 | RHD4ENMSER2000, RHD4ENMSER2010, RHD4CZ4C031SL1400 | -149.02d |
|  | 2949 | **RHD4-02-002-Z4-C031-Telecommunications Network - TC** |  | 2027-05-04 | 2027-05-13 |  |  |
|  | 2950 | **RHD4-02-002-C031-(TC)-Telecommunications Ducts** |  | 2027-05-04 | 2027-05-13 |  |  |
| RHD4CZ4C031TC2100 |  | Excavation of HDPE Ducts for Telecom Network - (RD-C-3/1)-Z4-C031-TC | 2d | 2027-05-04 | 2027-05-06 | RHD4ENSDZ4APPTC190, RHD4CZ4C031SL1100 | -154.02d |
| RHD4CZ4C031TC2200 |  | Installation of HDPE Ducts for Telecom Network - (RD-C-3/1)-Z4-C031-TC | 2d | 2027-05-06 | 2027-05-09 | RHD4CZ4C031TC2100, RHD4PRSHLDOSTC1000, RHD4PRSHLSTAGTC1000 | -146.02d |
| RHD4CZ4C031TC2400 |  | Backfilling of HDPE Ducts for Telecom Network - (RD-C-3/1)-Z4-C031-TC | 2d | 2027-05-11 | 2027-05-13 | RHD4CZ4C031TC2200, RHD4CZ4C031TC5200 | -148.02d |
|  | 2951 | **RHD4-02-002-C031-(TC)-Telecommunications Manholes** |  | 2027-05-06 | 2027-05-11 |  |  |
| RHD4CZ4C031TC5100 |  | Excavation for Manholes for Telecom Network - (RD-C-3/1)-Z4-C031-TC | 2d | 2027-05-06 | 2027-05-09 | RHD4CZ4C031TC2100, RHD4ENSDZ4APPTC190 | -154.02d |
| RHD4CZ4C031TC5200 |  | Installation of Manholes for Telecom Network - (RD-C-3/1)-Z4-C031-TC | 2d | 2027-05-09 | 2027-05-11 | RHD4CZ4C031TC5100, RHD4CZ4C031TC2200 SS, RHD4PRSHLDOSTC1200, RHD4PRSHLSTAGTC1200 | -148.02d |
|  | 2952 | **RHD4-02-002-C031-(TC)-Telecomminications Road Crossings** |  |  |  |  |  |
|  | 2953 | **RHD4-02-002-Z4-C031-Information and Communication Technologies - ICT** |  | 2027-02-09 | 2027-05-25 |  |  |
|  | 2954 | **RHD4-02-002-C031-(ICT)-Information and Communication Technologies Ducts** |  | 2027-05-09 | 2027-05-25 |  |  |
| RHD4CZ4C031ICT2100 |  | Excavation of HDPE Ducts for ICT Network - (RD-C-3/1)-Z4-C031-ICT | 3d | 2027-05-09 | 2027-05-12 | RHD4CZ4C031ICT3400, RHD4ENSDZ4APPICT200, RHD4CZ4C031TC5100 | -154.02d |
| RHD4CZ4C031ICT2200 |  | Installation of HDPE Ducts for ICT Network - (RD-C-3/1)-Z4-C031-ICT | 4d | 2027-05-12 | 2027-05-22 | RHD4CZ4C031ICT2100, RHD4PRSHLDOSICT1000, RHD4PRSHLSTAGICT1000 | -154.02d |
| RHD4CZ4C031ICT2400 |  | Backfilling of HDPE Ducts for ICT Network - (RD-C-3/1)-Z4-C031-ICT | 3d | 2027-05-22 | 2027-05-25 | RHD4CZ4C031ICT2200, RHD4CZ4C031ICT5200 | -154.02d |
|  | 2955 | **RHD4-02-002-C031-(ICT)-Information and Communication Technologies Manholes** |  | 2027-05-12 | 2027-05-22 |  |  |
| RHD4CZ4C031ICT5100 |  | Excavation for Manholes for ICT Network - (RD-C-3/1)-Z4-C031-ICT | 2d | 2027-05-12 | 2027-05-19 | RHD4CZ4C031ICT2100, RHD4ENSDZ4APPICT200 | -154.02d |
| RHD4CZ4C031ICT5200 |  | Installation of Manholes for ICT Network - (RD-C-3/1)-Z4-C031-ICT | 2d | 2027-05-19 | 2027-05-22 | RHD4CZ4C031ICT5100, RHD4CZ4C031ICT2200 SS, RHD4PRSHLDOSICT1200, RHD4PRSHLSTAGICT1200 | -154.02d |
|  | 2956 | **RHD4-02-002-C031-(ICT)-Information and Communication Technologies Road Crossings** |  | 2027-02-09 | 2027-02-20 |  |  |
| RHD4CZ4C031ICT3100 |  | Excavation for Road Crossings for ICT Network - (RD-C-3/1)-Z4-C031-ICT | 2d | 2027-02-09 | 2027-02-11 | RHD4ENSDZ4APPICT200, RHD4CZ4C031ST3102 | -152.02d |
| RHD4CZ4C031ICT3200 |  | Installation of Road Crossings for ICT Network - (RD-C-3/1)-Z4-C031-ICT | 2d | 2027-02-14 | 2027-02-15 | RHD4CZ4C031ICT3100, RHD4PRSHLDOSICT1100, RHD4PRSHLSTAGICT1100 | -154d |
| RHD4CZ4C031ICT3300 |  | Pouring of Road Crossings for ICT Network - (RD-C-3/1)-Z4-C031-ICT | 2d | 2027-02-16 | 2027-02-17 | RHD4CZ4C031ICT3200 | -154d |
| RHD4CZ4C031ICT3400 |  | Backfilling of Road Crossings for ICT Network - (RD-C-3/1)-Z4-C031-ICT | 2d | 2027-02-18 | 2027-02-20 | RHD4CZ4C031ICT3300 | -154d |
|  | 2944 | **RHD4-02-002-Z4-C031-Landscape Network - LS** |  |  |  |  |  |
|  | 2945 | **RHD4-02-002-C031-(LS)-Landscape Lighting cables** |  |  |  |  |  |
|  | 2946 | **RHD4-02-002-C031-(LS)-Landscape Feeder Pillars** |  |  |  |  |  |
|  | 2947 | **RHD4-02-002-C031-(LS)-Landscape Bollard Poles** |  |  |  |  |  |
|  | 2948 | **RHD4-02-002-C031-(LS)-Landscape Feeder Pillars Earthing** |  |  |  |  |  |
|  | 2957 | **RHD4-02-002-Z4-C031-Security Network - CCTV** |  | 2027-05-25 | 2027-07-07 |  |  |
|  | 2958 | **RHD4-02-002-C031-(CCTV)-Civil Works** |  | 2027-05-25 | 2027-06-06 |  |  |
| RHD4CZ4C031CCTV2100 |  | Civil Works for Security Network - (RD-C-3/1)-Z4-C031-CCTV | 10d | 2027-05-25 | 2027-06-06 | RHD4CZ4C031ICT2400, RHD4CZ4C031TC2400 | -154.02d |
|  | 2959 | **RHD4-02-002-C031-(CCTV)-CCTV Poles** |  | 2027-06-06 | 2027-06-17 |  |  |
| RHD4CZ4C031CCTV1100 |  | Excavation for RC Base for CCTV Poles for Security Network - (RD-C-3/1)-Z4-C031-CCTV | 2d | 2027-06-06 | 2027-06-08 | RHD4CZ4C031CCTV2100, RHD4ENSDZ4APPCCTV210 | -154.02d |
| RHD4CZ4C031CCTV1200 |  | Installation for RC Base for CCTV Poles for Security Network - (RD-C-3/1)-Z4-C031-CCTV | 2d | 2027-06-08 | 2027-06-10 | RHD4CZ4C031CCTV1100 | -154.02d |
| RHD4CZ4C031CCTV1300 |  | Backfill for RC Base for CCTV Poles for Security Network - (RD-C-3/1)-Z4-C031-CCTV | 2d | 2027-06-10 | 2027-06-13 | RHD4CZ4C031CCTV1200 | -154.02d |
| RHD4CZ4C031CCTV1400 |  | Installation for CCTV Poles for Security Network - (RD-C-3/1)-Z4-C031-CCTV | 2d | 2027-06-13 | 2027-06-15 | RHD4CZ4C031CCTV1300, RHD4PRSHLDOSCCTV1000, RHD4PRSHLSTACCTV1000 | -154.02d |

| ID | WBS | Task | Duration | Start | Finish | Predecessors | Complete | Total float |
| --- | --- | --- | --- | --- | --- | --- | --- | --- |
| RHD4CZ4C031CCTV1500 |  | Protection post Installation for CCTV Poles for Security Network - (RD-C-3/1)-Z4-C031-CCTV | 2d | 2027-06-15 | 2027-06-17 | RHD4CZ4C031CCTV1400 |  | -154.02d |
|  | 2960 | **RHD4-02-002-C031-(CCTV)-Camera** |  | 2027-06-17 | 2027-06-20 |  |  |  |
| RHD4CZ4C031CCTV3100 |  | Installation for Cameras for Security Network - (RD-C-3/1)-Z4-C031-CCTV | 2d | 2027-06-17 | 2027-06-20 | RHD4CZ4C031CCTV1400, RHD4CZ4C031CCTV4100, RHD4PRSHLDOSCCTV1100, RHD4PRSHLSTACCTV1100 |  | -134.02d |
|  | 2961 | **RHD4-02-002-C031-(CCTV)-Power and Infrastructure** |  | 2027-06-15 | 2027-06-20 |  |  |  |
| RHD4CZ4C031CCTV4100 |  | Installation of Power outlet, UPS and midspan for PTZ Camerafor Cameras for Security Network - (RD-C-3/1)-Z4-C031-CCTV | 2d | 2027-06-15 | 2027-06-17 | RHD4CZ4C031CCTV1400, RHD4PRSHLDOSCCTV1300, RHD4PRSHLSTACCTV1300, RHD4CZ4RA02CCTV2100 |  | -134.02d |
| RHD4CZ4C031CCTV4200 |  | Short Range Wireless PoP wireless Bridgefor CCTV Poles for Security Network - (RD-C-3/1)-Z4-C031-CCTV | 2d | 2027-06-17 | 2027-06-20 | RHD4CZ4C031CCTV4100 |  | -134.02d |
|  | 2963 | **RHD4-02-002-C031-(CCTV)-CCTV Panels and Components** |  | 2027-06-20 | 2027-07-07 |  |  |  |
| RHD4CZ4C031CCTV6100 |  | Installation for CCTV Panels for Security Network - (RD-C-3/1)-Z4-C031-CCTV | 15d | 2027-06-20 | 2027-07-07 | RHD4CZ4C031CCTV4200, RHD4CZ4C031CCTV3100, RHD4PRSHLDOSCCTV1200, RHD4PRSHLSTACCTV1200, RHD4PRLOLSTACCTV1001 |  | -134.02d |
|  | 2407 | **RHD4-02-002-Z4-L014** |  | 2026-07-06 | 2028-03-09 |  |  |  |
|  | 2438 | **RHD4-02-002-Z4-L014-Crossings Sewage Network - SWCr** |  |  |  |  |  |  |
|  | 2448 | **RHD4-02-002-L014-(SWCr)-MH Works - 1200 mm diameter** |  |  |  |  |  |  |
|  | 2449 | **RHD4-02-002-L014-(SWCr)-MH Works - 1200 mm diameter with Back drop** |  |  |  |  |  |  |
|  | 2444 | **RHD4-02-002-L014-(SWCr)-UPVC Pipes - 200 mm diameter** |  |  |  |  |  |  |
|  | 2442 | **RHD4-02-002-L014-(SWCr)-GRP Pipes - 600 mm diameter** |  |  |  |  |  |  |
|  | 2441 | **RHD4-02-002-L014-(SWCr)-GRP Pipes - 500 mm diameter** |  |  |  |  |  |  |
|  | 2482 | **RHD4-02-002-Z4-L014-Crossings Potable Network - PTCr** |  |  |  |  |  |  |
|  | 2484 | **RHD4-02-002-L014-(PTCr)-HDPE Pipes - 160 mm diameter** |  |  |  |  |  |  |
|  | 2483 | **RHD4-02-002-L014-(PTCr)-HDPE Pipes - 110 mm diameter** |  |  |  |  |  |  |
|  | 2488 | **RHD4-02-002-L014-(PTCr)-Gate Valves (Direct Buried)** |  |  |  |  |  |  |
|  | 2529 | **RHD4-02-002-Z4-L014-Crossings Irrigation Network - IRRC** |  |  |  |  |  |  |
|  | 2530 | **RHD4-02-002-L014-(IRRC)-HDPE Pipes - 160 mm diameter** |  |  |  |  |  |  |
|  | 2533 | **RHD4-02-002-L014-(IRRC)-HDPE Pipes - 250 mm diameter** |  |  |  |  |  |  |
|  | 2538 | **RHD4-02-002-L014-(IRRC)-Gate Valves (Direct Buried)** |  |  |  |  |  |  |
|  | 2541 | **RHD4-02-002-L014-(IRRC)-Wash out Chamber** |  |  |  |  |  |  |
|  | 2542 | **RHD4-02-002-L014-(IRRC)-Wash out Valves** |  |  |  |  |  |  |
|  | 2543 | **RHD4-02-002-L014-(IRRC)-Air Valve Chamber** |  |  |  |  |  |  |
|  | 2544 | **RHD4-02-002-L014-(IRRC)-Air Valves** |  |  |  |  |  |  |
|  | 2586 | **RHD4-02-002-Z4-L014-Road Works - RD** |  | 2026-07-06 | 2028-03-09 |  |  |  |
|  | 2587 | **RHD4-02-002-L014-(RD)-Subgrade** |  | 2026-07-06 | 2026-07-15 |  |  |  |
| RHD4CZ4L014RD1100 |  | Supply, lay and compaction subgrade compacted thickness 300 mm for Roads - (RD-L-14)-Z4-L014-RD | 5d | 2026-07-06 A | 2026-07-15 A | RHD4ENSDZ4APPRD220, RHD4ENSDZ4APPEW100 SS, RHD4CZ4L014ST1510 | 100% |  |
|  | 2588 | **RHD4-02-002-L014-(RD)-Aggregate Base Course** |  | 2027-02-14 | 2027-03-03 |  |  |  |
| RHD4CZ4L014RD2100 |  | Supply, lay and compaction Aggregate base course compacted thickness 300 mmfor Roads - (RD-L-14)-Z4-L014-RD | 15d | 2027-02-14 | 2027-03-03 | RHD4PRSHLDOSRD1000, RHD4PRSHLSTAGRD1000, RHD4CZ4L014RD1100 |  | -142d |
|  | 2589 | **RHD4-02-002-L014-(RD)-Bituminous base course Two Layers, including (MC1)&(RC2)** |  | 2027-03-04 | 2028-01-18 |  |  |  |
| RHD4CZ4L014RD3100 |  | Supply, lay and Asphaltic base course including Prime Coat (MC1) for 1st Layer - (RD-L-14)-Z4-L014-RD | 3d | 2027-03-04 | 2027-03-07 | RHD4CZ4L014RD2100, RHD4PRSHLDOSRD1100, RHD4ENMSASPH2000, RHD4ENMSASPH2010, RHD4PRSHLSTAGRD1100 |  | -142d |
| RHD4CZ4L014RD3200 |  | Supply, lay and Asphaltic base course including Tack Coat (RC2) for 2nd Layer - (RD-L-14)-Z4-L014-RD | 3d | 2028-01-15 | 2028-01-18 | RHD4CZ4L014RD3100, RHD4PRSHLDOSRD1100, RHD4PRSHLSTAGRD1100, RHD4CZ4L014CCTV6100 |  | -100.02d |
|  | 2591 | **RHD4-02-002-L014-(RD)-Precast Concrete Curb** |  | 2028-01-18 | 2028-01-30 |  |  |  |
| RHD4CZ4L014RD5100 |  | Supply and installation Precast Concrete Kerb for Roads - (RD-L-14)-Z4-L014-RD | 10d | 2028-01-18 | 2028-01-30 | RHD4PRSHLDOSRD1200, RHD4ENMSRD2000, RHD4ENMSRD2010, RHD4PRSHLSTAGRD1200, RHD4CZ4L014RD3200 |  | -100.02d |
|  | 2594 | **RHD4-02-002-L014-(RD)-Traffic Signage** |  | 2028-01-30 | 2028-02-07 |  |  |  |
| RHD4CZ4L014RD8100 |  | Installation of Traffic Signage for Road Network - (RD-L-14)-Z4-L014-RD | 7d | 2028-01-30 | 2028-02-07 | RHD4CZ4L014RD5100, RHD4CZ4L014TC2400, RHD4CZ4L014ICT2400, RHD4PRSHLDOSRD1600, RHD4PRSHLSTAGRD1600, RHD4CZ4A013RD8100, RHD4CZ4B07BF4001 |  | -100.02d |
|  | 2592 | **RHD4-02-002-L014-(RD)-Precast Interlocking Block Pavers** |  | 2028-02-07 | 2028-03-01 |  |  |  |
| RHD4CZ4L014RD6100 |  | Interlocking block pavers for sidewalk-footpath for Side walks and Parking areas - (RD-L-14)-Z4-L014-RD | 16d | 2028-02-07 | 2028-03-01 | RHD4CZ4L014RD8100, RHD4PRSHLDOSRD1300, RHD4PRSHLDOSRD1400, RHD4ENMSRD2000, RHD4ENMSRD2010, RHD4PRSHLSTAGRD1300, RHD4PRSHLSTAGRD1400 |  | -100.02d |
|  | 2590 | **RHD4-02-002-L014-(RD)-Bituminous concrete wearing course including tack coat (RC2)** |  | 2028-03-01 | 2028-03-05 |  |  |  |
| RHD4CZ4L014RD4100 |  | Supply, lay and compaction Asphaltic wearing course including tack Coat (RC2)for Road Network - (RD-L-14)-Z4-L014-RD | 3d | 2028-03-01 | 2028-03-05 | RHD4CZ4L014RD5100, RHD4CZ4L014RD6100, RHD4CZ4A013RD4100 |  | -100.02d |
|  | 2593 | **RHD4-02-002-L014-(RD)-Pavement Marking** |  | 2028-03-05 | 2028-03-09 |  |  |  |
| RHD4CZ4L014RD7100 |  | Pavement Markings for Road Network - (RD-L-14)-Z4-L014-RD | 4d | 2028-03-05 | 2028-03-09 | RHD4CZ4L014RD4100, RHD4PRSHLDOSRD1500, RHD4PRSHLSTAGRD1500, RHD4CZ4A013RD7100 |  | -100.02d |
|  | 2411 | **RHD4-02-002-Z4-L014-Storm Network - ST** |  | 2026-08-04 | 2027-05-01 |  |  |  |
|  | 6394 | **RHD4-02-002-L014-(ST)-GRP Pipes - 1400 mm diameter** |  | 2027-01-31 | 2027-02-13 |  |  |  |
| RHD4CZ4L014ST1110 |  | Excavation works for GRP Pipe Line 1400 mm - (RD-L-14)-Z4-L014-ST | 2d | 2027-01-31 | 2027-02-01 | RHD4CZ5C061ST1100 |  | -182d |
| RHD4CZ4L014ST1210 |  | Bedding works for GRP Pipe Line 1400 mm - (RD-L-14)-Z4-L014-ST | 2d | 2027-02-04 | 2027-02-06 | RHD4CZ5C061ST3501, RHD4CZ4L014ST1110 |  | -176d |
| RHD4CZ4L014ST1310 |  | Installing for GRP Pipe Line 1400 mm - (RD-L-14)-Z4-L014-ST | 2d | 2027-02-07 | 2027-02-08 | RHD4CZ4L014ST1210 |  | -176d |
| RHD4CZ4L014ST1410 |  | Primary Test for GRP Pipe Line 1400 mm - (RD-L-14)-Z4-L014-ST | 2d | 2027-02-09 | 2027-02-10 | RHD4CZ4L014ST1310 |  | -176d |
| RHD4CZ4L014ST1510 |  | Backfilling and warning tape works for GRP Pipe Line 1400 mm - (RD-L-14)-Z4-L014-ST | 2d | 2027-02-11 | 2027-02-13 | RHD4CZ4L014ST1410 |  | -176d |
|  | 6393 | **RHD4-02-002-L014-(ST)-GRP Pipes - 1300 mm diameter** |  | 2026-08-04 | 2027-02-16 |  |  |  |
| RHD4CZ4L014ST1109 |  | Excavation works for GRP Pipe Line 1300 mm - (RD-L-14)-Z4-L014-ST | 3d | 2026-08-04 A | 2026-08-28 A | RHD4CZ4L014ST1110 | 100% |  |
| RHD4CZ4L014ST1209 |  | Bedding works for GRP Pipe Line 1300 mm - (RD-L-14)-Z4-L014-ST | 3d | 2026-08-06 A | 2026-08-30 A | RHD4CZ4L014ST1109 | 100% |  |
| RHD4CZ4L014ST1309 |  | Installing for GRP Pipe Line 1300 mm - (RD-L-14)-Z4-L014-ST | 2d | 2026-08-08 A | 2026-09-02 A | RHD4CZ4L014ST1209 | 100% |  |
| RHD4CZ4L014ST1409 |  | Primary Test for GRP Pipe Line 1300 mm - (RD-L-14)-Z4-L014-ST | 2d | 2027-02-02 | 2027-02-03 | RHD4CZ4L014ST1309 |  | -168d |
| RHD4CZ4L014ST1509 |  | Backfilling and warning tape works for GRP Pipe Line 1300 mm - (RD-L-14)-Z4-L014-ST | 3d | 2027-02-14 | 2027-02-16 | RHD4CZ4L014ST1409, RHD4CZ4L014ST1510 |  | -176d |
|  | 2428 | **RHD4-02-002-L014-(ST)-MH Works - 1200 mm diameter** |  | 2026-08-04 | 2027-03-01 |  |  |  |
| RHD4CZ4L014ST3100 |  | Excavation and PC Blinding works for MH 1200 mm - (RD-L-14)-Z4-L014-ST | 2d | 2026-08-04 A | 2027-02-18 | RHD4ENSDZ4APPST110, RHD4ENMSST2000, RHD4ENMSST2010, RHD4CZ4L014ST1509 | 75% | -176d |
| RHD4CZ4L014ST3200 |  | Installation of Base for MH 1200 mm - (RD-L-14)-Z4-L014-ST | 2d | 2026-09-19 A | 2027-02-21 | RHD4CZ4L014ST3100, RHD4PRSHLSTAGST1603 | 75% | -166d |
| RHD4CZ4L014ST3300 |  | MH Ring and C.Slab works and Backfilling works for MH 1200 mm - (RD-L-14)-Z4-L014-ST | 2d | 2026-10-24 A | 2027-02-24 | RHD4CZ4L014ST3200, RHD4PRSHLDOSST1603 | 25% | -166d |
| RHD4CZ4L014ST3400 |  | Steel Cover for MH 1200 mm - (RD-L-14)-Z4-L014-ST | 2d | 2027-02-25 | 2027-02-27 | RHD4CZ4L014ST3300, RHD4PRSHLDOSST1703, RHD4PRSHLSTAGST1703 |  | -166d |
| RHD4CZ4L014ST3500 |  | Finishing, Benching, Testing works for MH 1200 mm - (RD-L-14)-Z4-L014-ST | 2d | 2027-02-28 | 2027-03-01 | RHD4CZ4L014ST3400 |  | -166d |
|  | 2430 | **RHD4-02-002-L014-(ST)-MH Works - 2000 mm diameter** |  | 2026-08-04 | 2027-04-20 |  |  |  |
| RHD4CZ4L014ST3102 |  | Excavation and PC Blinding works for MH 2000 mm - (RD-L-14)-Z4-L014-ST | 6d | 2026-08-04 A | 2027-03-23 | RHD4CZ4L014ST3100, RHD4ENSDZ4APPST110, RHD4ENMSST2000, RHD4CZ4C031ST3100, RHD4CZ2L102ST1502, RHD4CZ7L015ICT3400, RHD4CZ3C083ST8500 | 89% | -197.02d |
| RHD4CZ4L014ST3202 |  | Installation of Base for MH 2000 mm - (RD-L-14)-Z4-L014-ST | 8d | 2026-09-19 A | 2027-03-25 | RHD4CZ4L014ST3102, RHD4CZ4L014ST3200, RHD4PRSHLSTAGST1603, RHD4CZ4L014RD3100, RHD4CZ4A013MV2400 | 72% | -152.02d |
| RHD4CZ4L014ST3302 |  | MH Ring and C.Slab works and Backfilling works for MH 2000 mm - (RD-L-14)-Z4-L014-ST | 8d | 2027-03-25 | 2027-04-04 | RHD4CZ4L014ST3202, RHD4CZ4L014ST3300, RHD4PRSHLDOSST1603 |  | -152.02d |
| RHD4CZ4L014ST3402 |  | Steel Cover for MH 2000 mm - (RD-L-14)-Z4-L014-ST | 6d | 2027-04-06 | 2027-04-13 | RHD4CZ4L014ST3302, RHD4CZ4L014ST1500, RHD4CZ4L014ST3400 SS, RHD4PRSHLDOSST1703, RHD4PRSHLSTAGST1703 |  | -139.02d |
| RHD4CZ4L014ST3502 |  | Finishing, Benching, Testing works for MH 2000 mm - (RD-L-14)-Z4-L014-ST | 6d | 2027-04-13 | 2027-04-20 | RHD4CZ4L014ST3402, RHD4CZ4L014ST3500 SS, RHD4CZ7A012LV2400 |  | -139.02d |

| ID | WBS | Task | Duration | Start | Finish | Predecessors | Complete | Total float |
| --- | --- | --- | --- | --- | --- | --- | --- | --- |
|  | 2429 | **RHD4-02-002-L014-(ST)-MH Works - 1500 mm diameter** |  | 2026-08-04 | 2027-05-01 |  |  |  |
| RHD4CZ4L014ST3101 |  | Excavation and PC Blinding works for MH 1500 mm - (RD-L-14)-Z4-L014-ST | 2d | 2026-08-04 A | 2026-08-06 A | RHD4CZ4L014ST3102, RHD4ENSDZ4APPST110, RHD4ENMSST2000 | 100% |  |
| RHD4CZ4L014ST3201 |  | Installation of Base for MH 1500 mm - (RD-L-14)-Z4-L014-ST | 2d | 2026-09-20 A | 2027-03-28 | RHD4CZ4L014ST3101, RHD4CZ4L014ST3202, RHD4PRSHLSTAGST1603 | 50% | -146.02d |
| RHD4CZ4L014ST3301 |  | MH Ring and C.Slab works and Backfilling works for MH 1500 mm - (RD-L-14)-Z4-L014-ST | 2d | 2027-04-04 | 2027-04-06 | RHD4CZ4L014ST3201, RHD4CZ4L014ST3302, RHD4PRSHLDOSST1603 |  | -152.02d |
| RHD4CZ4L014ST3401 |  | Steel Cover for MH 1500 mm - (RD-L-14)-Z4-L014-ST | 2d | 2027-04-26 | 2027-04-28 | RHD4CZ4L014ST3301, RHD4CZ4L014ST1500, RHD4CZ4L014ST3402 SS, RHD4PRSHLDOSST1703, RHD4PRSHLSTAGST1703, RHD4CZ4L014ST2500 |  | -152.02d |
| RHD4CZ4L014ST3501 |  | Finishing, Benching, Testing works for MH 1500 mm - (RD-L-14)-Z4-L014-ST | 2d | 2027-04-28 | 2027-05-01 | RHD4CZ4L014ST3401, RHD4CZ4L014ST2500, RHD4CZ4L014ST3502 SS |  | -152.02d |
|  | 2420 | **RHD4-02-002-L014-(ST)-GRP Pipes - 1200 mm diameter** |  |  |  |  |  |  |
|  | 2419 | **RHD4-02-002-L014-(ST)-GRP Pipes - 1100 mm diameter** |  | 2026-08-05 | 2027-04-03 |  |  |  |
| RHD4CZ4L014ST1107 |  | Excavation works for GRP Pipe Line 1100 mm - (RD-L-14)-Z4-L014-ST | 2d | 2026-08-05 A | 2027-03-27 | RHD4ENSDZ4APPST110, RHD4CZ4L014ST3101, RHD4CZ4L014ST1109 | 70% | -139.02d |
| RHD4CZ4L014ST1207 |  | Bedding works for GRP Pipe Line 1100 mm - (RD-L-14)-Z4-L014-ST | 2d | 2026-08-08 A | 2027-03-28 | RHD4CZ4L014ST1107 | 70% | -96.02d |
| RHD4CZ4L014ST1307 |  | Installing for GRP Pipe Line 1100 mm - (RD-L-14)-Z4-L014-ST | 2d | 2026-09-15 A | 2027-03-29 | RHD4CZ4L014ST1207, RHD4PRSHLSTAGST1003, RHD4PRSHLDOSST1603, RHD4PRSHLPOST1000, RHD4PRSHLDOSST1003 | 70% | -96.02d |
| RHD4CZ4L014ST1407 |  | Primary Test for GRP Pipe Line 1100 mm - (RD-L-14)-Z4-L014-ST | 2d | 2027-03-29 | 2027-03-31 | RHD4CZ4L014ST1307 |  | -96.02d |
| RHD4CZ4L014ST1507 |  | Backfilling and warning tape works for GRP Pipe Line 1100 mm - (RD-L-14)-Z4-L014-ST | 2d | 2027-03-31 | 2027-04-03 | RHD4CZ4L014ST1407 |  | -96.02d |
|  | 2418 | **RHD4-02-002-L014-(ST)-GRP Pipes - 1000 mm diameter** |  | 2026-08-06 | 2027-04-05 |  |  |  |
| RHD4CZ4L014ST1106 |  | Excavation works for GRP Pipe Line 1000 mm - (RD-L-14)-Z4-L014-ST | 2d | 2026-08-06 A | 2026-08-08 A | RHD4CZ4L014ST1107, RHD4ENSDZ4APPST110, RHD4CZ4L014ST1107 FF | 100% |  |
| RHD4CZ4L014ST1206 |  | Bedding works for GRP Pipe Line 1000 mm - (RD-L-14)-Z4-L014-ST | 2d | 2026-08-08 A | 2026-08-09 A | RHD4CZ4L014ST1106, RHD4CZ4L014ST1207 | 100% |  |
| RHD4CZ4L014ST1306 |  | Installing for GRP Pipe Line 1000 mm - (RD-L-14)-Z4-L014-ST | 2d | 2026-08-09 A | 2026-08-10 A | RHD4CZ4L014ST1206, RHD4CZ4L014ST1307, RHD4PRSHLSTAGST1003, RHD4PRSHLDOSST1603, RHD4PRSHLPOST1000, RHD4PRSHLDOSST1003 | 100% |  |
| RHD4CZ4L014ST1406 |  | Primary Test for GRP Pipe Line 1000 mm - (RD-L-14)-Z4-L014-ST | 2d | 2027-03-31 | 2027-04-03 | RHD4CZ4L014ST1306, RHD4CZ4L014ST1407 |  | -96.02d |
| RHD4CZ4L014ST1506 |  | Backfilling and warning tape works for GRP Pipe Line 1000 mm - (RD-L-14)-Z4-L014-ST | 2d | 2027-04-03 | 2027-04-05 | RHD4CZ4L014ST1406, RHD4CZ4L014ST1507 |  | -96.02d |
|  | 2417 | **RHD4-02-002-L014-(ST)-GRP Pipes - 900 mm diameter** |  | 2026-08-06 | 2027-04-05 |  |  |  |
| RHD4CZ4L014ST1105 |  | Excavation works for GRP Pipe Line 900 mm - (RD-L-14)-Z4-L014-ST | 2d | 2026-08-06 A | 2026-08-08 A | RHD4CZ4L014ST1106, RHD4ENSDZ4APPST110 | 100% |  |
| RHD4CZ4L014ST1205 |  | Bedding works for GRP Pipe Line 900 mm - (RD-L-14)-Z4-L014-ST | 2d | 2026-08-08 A | 2026-08-10 A | RHD4CZ4L014ST1105, RHD4CZ4L014ST1206 | 100% |  |
| RHD4CZ4L014ST1305 |  | Installing for GRP Pipe Line 900 mm - (RD-L-14)-Z4-L014-ST | 2d | 2026-08-10 A | 2026-08-12 A | RHD4CZ4L014ST1205, RHD4CZ4L014ST1306, RHD4PRSHLSTAGST1003, RHD4PRSHLDOSST1603, RHD4PRSHLPOST1000, RHD4PRSHLDOSST1003 | 100% |  |
| RHD4CZ4L014ST1505 |  | Backfilling and warning tape works for GRP Pipe Line 900 mm - (RD-L-14)-Z4-L014-ST | 2d | 2026-10-01 A | 2026-10-03 A | RHD4CZ4L014ST1405, RHD4CZ4L014ST1506 | 100% |  |
| RHD4CZ4L014ST1405 |  | Primary Test for GRP Pipe Line 900 mm - (RD-L-14)-Z4-L014-ST | 2d | 2027-04-03 | 2027-04-05 | RHD4CZ4L014ST1305, RHD4CZ4L014ST1406, RHD4CZ6A015PT3200, RHD4CZ6C052PT4500 |  | -96.02d |
|  | 2416 | **RHD4-02-002-L014-(ST)-GRP Pipes - 800 mm diameter** |  |  |  |  |  |  |
|  | 2415 | **RHD4-02-002-L014-(ST)-GRP Pipes - 700 mm diameter** |  |  |  |  |  |  |
|  | 2414 | **RHD4-02-002-L014-(ST)-GRP Pipes - 600 mm diameter** |  |  |  |  |  |  |
|  | 2413 | **RHD4-02-002-L014-(ST)-GRP Pipes - 500 mm diameter** |  | 2026-08-04 | 2027-03-29 |  |  |  |
| RHD4CZ4L014ST1101 |  | Excavation works for GRP Pipe Line 500 mm - (RD-L-14)-Z4-L014-ST | 2d | 2026-08-04 A | 2026-08-06 A | RHD4ENSDZ4APPST110, RHD4CZ4L014ST1105 | 100% |  |
| RHD4CZ4L014ST1201 |  | Bedding works for GRP Pipe Line 500 mm - (RD-L-14)-Z4-L014-ST | 2d | 2026-08-06 A | 2026-08-08 A | RHD4CZ4L014ST1101 | 100% |  |
| RHD4CZ4L014ST1301 |  | Installing for GRP Pipe Line 500 mm - (RD-L-14)-Z4-L014-ST | 2d | 2026-08-08 A | 2026-08-10 A | RHD4CZ4L014ST1201, RHD4PRSHLSTAGST1003, RHD4PRSHLDOSST1603, RHD4PRSHLPOST1000, RHD4PRSHLDOSST1003 | 100% |  |
| RHD4CZ4L014ST1501 |  | Backfilling and warning tape works for GRP Pipe Line 500 mm - (RD-L-14)-Z4-L014-ST | 2d | 2026-08-22 A | 2026-08-23 A | RHD4CZ4L014ST1401 | 100% |  |
| RHD4CZ4L014ST1401 |  | Primary Test for GRP Pipe Line 500 mm - (RD-L-14)-Z4-L014-ST | 2d | 2027-03-27 | 2027-03-29 | RHD4CZ4L014ST1301 |  | -136.02d |
|  | 2412 | **RHD4-02-002-L014-(ST)-GRP Pipes - 400 mm diameter** |  | 2026-08-04 | 2027-04-06 |  |  |  |
| RHD4CZ4L014ST1100 |  | Excavation works for GRP Pipe Line 400 mm - (RD-L-14)-Z4-L014-ST | 2d | 2026-08-04 A | 2027-03-28 | RHD4CZ4L014ST1101, RHD4ENSDZ4APPST110 | 51% | -139.02d |
| RHD4CZ4L014ST1200 |  | Bedding works for GRP Pipe Line 400 mm - (RD-L-14)-Z4-L014-ST | 2d | 2026-09-14 A | 2027-03-30 | RHD4CZ4L014ST1100, RHD4CZ4L014ST1201 | 55% | -139.02d |
| RHD4CZ4L014ST1300 |  | Installing for GRP Pipe Line 400 mm - (RD-L-14)-Z4-L014-ST | 2d | 2026-10-01 A | 2027-04-01 | RHD4CZ4L014ST1200, RHD4CZ4L014ST1301, RHD4PRSHLSTAGST1003, RHD4PRSHLDOSST1603, RHD4PRSHLPOST1000, RHD4PRSHLDOSST1003 | 60% | -139.02d |
| RHD4CZ4L014ST1500 |  | Backfilling and warning tape works for GRP Pipe Line 400 mm - (RD-L-14)-Z4-L014-ST | 2d | 2026-10-17 A | 2027-04-06 | RHD4CZ4L014ST1400, RHD4CZ4L014ST1501 | 60% | -139.02d |
| RHD4CZ4L014ST1400 |  | Primary Test for GRP Pipe Line 400 mm - (RD-L-14)-Z4-L014-ST | 2d | 2027-04-01 | 2027-04-04 | RHD4CZ4L014ST1300, RHD4CZ4L014ST1401 |  | -139.02d |
|  | 2427 | **RHD4-02-002-L014-(ST)-UPVC Pipes - 400 mm diameter** |  |  |  |  |  |  |
|  | 2426 | **RHD4-02-002-L014-(ST)-UPVC Pipes - 300 mm diameter** |  | 2026-09-17 | 2027-04-26 |  |  |  |
| RHD4CZ4L014ST2100 |  | Excavation works for UPVC Pipe Line 300 mm - (RD-L-14)-Z4-L014-ST | 4d | 2026-09-17 A | 2027-04-11 | RHD4CZ4L014ST3300, RHD4CZ4L014ST3301, RHD4ENSDZ4APPST110 | 31% | -152.02d |
| RHD4CZ4L014ST2200 |  | Bedding works for UPVC Pipe Line 300 mm - (RD-L-14)-Z4-L014-ST | 3d | 2026-09-22 A | 2027-04-14 | RHD4CZ4L014ST2100 | 8% | -152.02d |
| RHD4CZ4L014ST2300 |  | Installing for UPVC Pipe Line 300 mm - (RD-L-14)-Z4-L014-ST | 4d | 2026-09-26 A | 2027-04-19 | RHD4CZ4L014ST2200, RHD4PRSHLDOSST1103, RHD4PRSHLSTAGST1103, RHD4PRSHLSTAIRRC1000 | 10% | -152.02d |
| RHD4CZ4L014ST2500 |  | Backfilling and warning tape works for UPVC Pipe Line 300 mm - (RD-L-14)-Z4-L014-ST | 4d | 2026-10-24 A | 2027-04-26 | RHD4CZ4L014ST2400, RHD4CZ4L014ST6100 | 8% | -152.02d |
| RHD4CZ4L014ST2400 |  | Primary Test for UPVC Pipe Line 300 mm - (RD-L-14)-Z4-L014-ST | 2d | 2027-04-19 | 2027-04-21 | RHD4CZ4L014ST2300 |  | -152.02d |
|  | 2434 | **RHD4-02-002-L014-(ST)-Concrete Encasement** |  | 2027-04-17 | 2027-04-19 |  |  |  |
| RHD4CZ4L014ST6100 |  | Pipe Encasement for Storm Pipelines - (RD-L-14)-Z4-L014-ST | 2d | 2027-04-17 | 2027-04-19 | RHD4CZ4L014ST2300 SS, RHD4CZ4L014ST2300 FF, RHD4CZ4L014ST2200 |  | -150.02d |
|  | 2435 | **RHD4-02-002-Z4-L014-Catch Basin - ST** |  | 2026-10-24 | 2027-05-13 |  |  |  |
|  | 2436 | **RHD4-02-002-L014-(ST)-Single Catch Basin Works** |  | 2026-10-24 | 2027-05-11 |  |  |  |
| RHD4CZ4L014ST7100 |  | Excavation works for Single Catch Basin - (RD-L-14)-Z4-L014-ST | 5d | 2026-10-24 A | 2027-04-12 | RHD4CZ4L014ST3300, RHD4CZ4L014ST3301, RHD4ENSDZ4APPST110 | 5% | -146.02d |
| RHD4CZ4L014ST7200 |  | PC Blinding, Installation and Pipe connection for Single Catch Basin - (RD-L-14)-Z4-L014-ST | 5d | 2026-10-25 A | 2027-04-18 | RHD4CZ4L014ST7100 | 2% | -146.02d |
| RHD4CZ4L014ST7300 |  | Rings & C.Slab & Final Backfill for Single Catch Basin - (RD-L-14)-Z4-L014-ST | 6d | 2026-10-27 A | 2027-04-25 | RHD4CZ4L014ST7200, RHD4PRSHLDOSST1303, RHD4PRSHLSTAGST1303 | 3% | -146.02d |
| RHD4CZ4L014ST7400 |  | Steel Cover for Single Catch Basin - (RD-L-14)-Z4-L014-ST | 5d | 2027-04-25 | 2027-05-01 | RHD4CZ4L014ST7300, RHD4PRSHLDOSST1703 |  | -146.02d |
| RHD4CZ4L014ST7500 |  | Finishing and Insulation works for Single Catch Basin - (RD-L-14)-Z4-L014-ST | 9d | 2027-05-01 | 2027-05-11 | RHD4CZ4L014ST7400 |  | -146.02d |
|  | 2437 | **RHD4-02-002-L014-(ST)-Double Catch Basin Works** |  | 2027-04-12 | 2027-05-13 |  |  |  |
| RHD4CZ4L014ST8100 |  | Excavation works for Double Catch Basin - (RD-L-14)-Z4-L014-ST | 2d | 2027-04-12 | 2027-04-14 | RHD4CZ4L014ST7100, RHD4CZ4L014ST3300, RHD4CZ4L014ST3301, RHD4ENSDZ4APPST110 |  | -129.02d |
| RHD4CZ4L014ST8200 |  | PC Blinding, Installation and Pipe connection for Double Catch Basin - (RD-L-14)-Z4-L014-ST | 2d | 2027-04-18 | 2027-04-20 | RHD4CZ4L014ST8100, RHD4CZ4L014ST7200 |  | -132.02d |
| RHD4CZ4L014ST8300 |  | Rings & C.Slab & Final Backfillfor Double Catch Basin - (RD-L-14)-Z4-L014-ST | 2d | 2027-04-25 | 2027-04-27 | RHD4CZ4L014ST8200, RHD4CZ4L014ST7300, RHD4PRSHLDOSST1303, RHD4PRSHLSTAGST1303 |  | -136.02d |
| RHD4CZ4L014ST8400 |  | Steel Cover for Double Catch Basin - (RD-L-14)-Z4-L014-ST | 2d | 2027-05-01 | 2027-05-03 | RHD4CZ4L014ST8300, RHD4CZ4L014ST7400, RHD4PRSHLDOSST1703 |  | -139.02d |
| RHD4CZ4L014ST8500 |  | Finishing and Insulation works for Double Catch Basin - (RD-L-14)-Z4-L014-ST | 2d | 2027-05-11 | 2027-05-13 | RHD4CZ4L014ST8400, RHD4CZ4L014ST7500 |  | -146.02d |
|  | 2460 | **RHD4-02-002-Z4-L014-Sewage Network - SW** |  | 2026-08-11 | 2027-06-22 |  |  |  |
|  | 5307 | **RHD4-02-002-L014-(SW)-MH Works - 1200 mm diameter** |  | 2026-08-15 | 2027-06-22 |  |  |  |
| RHD4CZ4L014SW3100 |  | Excavation and PC Blinding works for MH 1200 mm - (RD-L-14)-Z4-L014-SW | 10d | 2026-08-15 A | 2027-04-22 | RHD4CZ4L014ST2100 | 70% | -137.02d |
| RHD4CZ4L014SW3200 |  | Installation of Base for MH 1200 mm - (RD-L-14)-Z4-L014-SW | 17d | 2026-09-20 A | 2027-04-28 | RHD4CZ4L014SW3100 | 23% | -137.02d |
| RHD4CZ4L014SW3300 |  | MH Ring and C.Slab works and Backfilling works for MH 1200 mm - (RD-L-14)-Z4-L014-SW | 17d | 2027-04-28 | 2027-05-23 | RHD4CZ4L014SW3200 |  | -137.02d |
| RHD4CZ4L014SW3400 |  | Steel Cover for MH 1200 mm - (RD-L-14)-Z4-L014-SW | 8d | 2027-05-23 | 2027-06-01 | RHD4CZ4L014SW3300 |  | -137.02d |
| RHD4CZ4L014SW3500 |  | Finishing, Benching, Testing works for MH 1200 mm - (RD-L-14)-Z4-L014-SW | 17d | 2027-06-02 | 2027-06-22 | RHD4CZ4L014SW1500, RHD4CZ4L014IRR3202, RHD4CZ4L014SW3400 |  | -138.02d |
|  | 1325 | **RHD4-02-002-L014-(SW)-GRP Pipes - 300 mm diameter** |  | 2026-08-11 | 2027-05-12 |  |  |  |

| ID | WBS | Task | Duration | Start | Finish | Predecessors | Complete | Total float |
| --- | --- | --- | --- | --- | --- | --- | --- | --- |
| RHD4CZ4L014SW1100 |  | Excavation works for GRP Pipe Line 300 mm - (RD-L-14)-Z4-L014-SW | 9d | 2026-08-11 A | 2026-08-15 A | RHD4CZ4L014ST2100 | 100% |  |
| RHD4CZ4L014SW1200 |  | Bedding works for GRP Pipe Line 300 mm - (RD-L-14)-Z4-L014-SW | 9d | 2026-08-12 A | 2026-08-17 A | RHD4CZ4L014SW1100 | 100% |  |
| RHD4CZ4L014SW1300 |  | Installing for GRP Pipe Line 300 mm - (RD-L-14)-Z4-L014-SW | 9d | 2026-08-15 A | 2026-09-16 A | RHD4CZ4L014SW1200 | 100% |  |
| RHD4CZ4L014SW1400 |  | Primary Test for GRP Pipe Line 300 mm - (RD-L-14)-Z4-L014-SW | 9d | 2027-04-11 | 2027-04-21 | RHD4CZ4L014SW1300 |  | -115.02d |
| RHD4CZ4L014SW1500 |  | Backfilling and warning tape works for GRP Pipe Line 300 mm - (RD-L-14)-Z4-L014-SW | 9d | 2027-05-02 | 2027-05-12 | RHD4CZ4L014SW3501, RHD4CZ4L014SW1400 |  | -124.02d |
|  | 957 | **RHD4-02-002-L014-(SW)-MH Works - 1200 mm diameter with Back drop** |  | 2026-08-15 | 2027-05-02 |  |  |  |
| RHD4CZ4L014SW3101 |  | Excavation and PC Blinding works for MH 1200 mm - (RD-L-14)-Z4-L014-SW | 4d | 2026-08-15 A | 2026-08-18 A | RHD4CZ4L014ST2100 | 100% |  |
| RHD4CZ4L014SW3201 |  | Installation of Base for MH 1200 mm - (RD-L-14)-Z4-L014-SW | 5d | 2026-08-17 A | 2027-04-17 | RHD4CZ4L014SW3101 | 30% | -124.02d |
| RHD4CZ4L014SW3301 |  | MH Ring and C.Slab works and Backfilling works for MH 1200 mm - (RD-L-14)-Z4-L014-SW | 5d | 2027-04-17 | 2027-04-22 | RHD4CZ4L014SW3201 |  | -124.02d |
| RHD4CZ4L014SW3401 |  | Steel Cover for MH 1200 mm - (RD-L-14)-Z4-L014-SW | 3d | 2027-04-22 | 2027-04-26 | RHD4CZ4L014SW3301 |  | -124.02d |
| RHD4CZ4L014SW3501 |  | Finishing, Benching, Testing works for MH 1200 mm - (RD-L-14)-Z4-L014-SW | 5d | 2027-04-26 | 2027-05-02 | RHD4CZ4L014SW2500, RHD4CZ4L014SW3401 |  | -124.02d |
|  | 2464 | **RHD4-02-002-L014-(SW)-GRP Pipes - 600 mm diameter** |  |  |  |  |  |  |
|  | 2463 | **RHD4-02-002-L014-(SW)-GRP Pipes - 500 mm diameter** |  |  |  |  |  |  |
|  | 2466 | **RHD4-02-002-L014-(SW)-UPVC Pipes - 200 mm diameter** |  | 2026-08-11 | 2027-04-25 |  |  |  |
| RHD4CZ4L014SW2100 |  | Excavation works for UPVC Pipe Line 200 mm - (RD-L-14)-Z4-L014-SW | 2d | 2026-08-11 A | 2027-04-13 | RHD4ENSDZ4APPSW120, RHD4CZ4L014ST2100 | 91% | -123.02d |
| RHD4CZ4L014SW2200 |  | Bedding works for UPVC Pipe Line 200 mm - (RD-L-14)-Z4-L014-SW | 2d | 2026-08-13 A | 2027-04-15 | RHD4CZ4L014SW2100 | 92% | -123.02d |
| RHD4CZ4L014SW2300 |  | Installing for UPVC Pipe Line 200 mm - (RD-L-14)-Z4-L014-SW | 3d | 2026-09-15 A | 2027-04-19 | RHD4CZ4L014SW2200, RHD4PRSHLDOSSW1003, RHD4PRSHLSTAGSW1003 | 92% | -123.02d |
| RHD4CZ4L014SW2500 |  | Backfilling and warning tape works for UPVC Pipe Line 200 mm - (RD-L-14)-Z4-L014-SW | 3d | 2026-09-24 A | 2027-04-25 | RHD4CZ4L014SW2400 | 92% | -123.02d |
| RHD4CZ4L014SW2400 |  | Primary Test for UPVC Pipe Line 200 mm - (RD-L-14)-Z4-L014-SW | 2d | 2027-04-19 | 2027-04-21 | RHD4CZ4L014SW2300 |  | -123.02d |
|  | 2469 | **RHD4-02-002-L014-(SW)-Concrete Encasement** |  |  |  |  |  |  |
|  | 2497 | **RHD4-02-002-Z4-L014-Potable Network - PT** |  | 2027-05-03 | 2027-08-05 |  |  |  |
|  | 2498 | **RHD4-02-002-L014-(PT)-HDPE Pipes - 110 mm diameter** |  | 2027-05-03 | 2027-05-19 |  |  |  |
| RHD4CZ4L014PT1100 |  | Excavation works for HDPE Pipline 110 mm - (RD-L-14)-Z4-L014-PT | 2d | 2027-05-03 | 2027-05-05 | RHD4CZ4C031PT1503, RHD4ENSDZ4APPPT130, RHD4ENMSPT2000 |  | -170.02d |
| RHD4CZ4L014PT1200 |  | Bedding works for HDPE Pipline 110 mm - (RD-L-14)-Z4-L014-PT | 2d | 2027-05-05 | 2027-05-08 | RHD4CZ4L014PT1100 |  | -128.02d |
| RHD4CZ4L014PT1300 |  | Installing for HDPE Pipline 110 mm - (RD-L-14)-Z4-L014-PT | 2d | 2027-05-08 | 2027-05-10 | RHD4CZ4L014PT1200, RHD4PRSHLDOSPT1000, RHD4PRSHLSTAGPT1000 |  | -128.02d |
| RHD4CZ4L014PT1400 |  | Primary Test for HDPE Pipline 110 mm - (RD-L-14)-Z4-L014-PT | 2d | 2027-05-10 | 2027-05-12 | RHD4CZ4L014PT1300 |  | -128.02d |
| RHD4CZ4L014PT1500 |  | Backfilling and warning tape works for HDPE Pipline 110 mm - (RD-L-14)-Z4-L014-PT | 2d | 2027-05-12 | 2027-05-19 | RHD4CZ4L014PT1400, RHD4CZ4L014ST1505 |  | -128.02d |
|  | 2499 | **RHD4-02-002-L014-(PT)-HDPE Pipes - 160 mm diameter** |  | 2027-05-05 | 2027-07-01 |  |  |  |
| RHD4CZ4L014PT1101 |  | Excavation works for HDPE Pipline 160 mm - (RD-L-14)-Z4-L014-PT | 9d | 2027-05-05 | 2027-05-20 | RHD4ENSDZ4APPPT130, RHD4ENMSPT2000, RHD4CZ4L014PT1100 |  | -149.02d |
| RHD4CZ4L014PT1201 |  | Bedding works for HDPE Pipline 160 mm - (RD-L-14)-Z4-L014-PT | 9d | 2027-05-20 | 2027-05-31 | RHD4CZ4L014PT1101 |  | -148.02d |
| RHD4CZ4L014PT1301 |  | Installing for HDPE Pipline 160 mm - (RD-L-14)-Z4-L014-PT | 9d | 2027-05-31 | 2027-06-10 | RHD4CZ4L014PT1201, RHD4PRSHLDOSPT1000, RHD4PRSHLSTAGPT1000 |  | -148.02d |
| RHD4CZ4L014PT1401 |  | Primary Test for HDPE Pipline 160 mm - (RD-L-14)-Z4-L014-PT | 9d | 2027-06-10 | 2027-06-21 | RHD4CZ4L014PT1301 |  | -138.02d |
| RHD4CZ4L014PT1501 |  | Backfilling and warning tape works for HDPE Pipline 160 mm - (RD-L-14)-Z4-L014-PT | 9d | 2027-06-21 | 2027-07-01 | RHD4CZ4L014PT1401 |  | -138.02d |
|  | 2503 | **RHD4-02-002-L014-(PT)-Gate Valves (Direct Buried)** |  | 2027-06-07 | 2027-07-05 |  |  |  |
| RHD4CZ4L014PT3100 |  | Installation for Direct Buried Gate Valves - (RD-L-14)-Z4-L014-PT | 3d | 2027-06-07 | 2027-06-10 | RHD4CZ4L014PT1301 FF, RHD4CZ4L014PT1301 SS, RHD4PRSHLDOSPT1200, RHD4PRSHLSTAGPT1200 |  | -148.02d |
| RHD4CZ4L014PT3200 |  | Stem and Service box for Direct Buried Gate Valves - (RD-L-14)-Z4-L014-PT | 3d | 2027-07-01 | 2027-07-05 | RHD4CZ4L014PT3100, RHD4CZ4L014PT1501 |  | -121.02d |
|  | 2506 | **RHD4-02-002-L014-(PT)-Wash out Valve Chambers** |  | 2027-05-05 | 2027-05-19 |  |  |  |
| RHD4CZ4L014PT2101 |  | Excavation and Bedding for Wash out Valve Chambers for Potable Water Network - (RD-L-14)-Z4-L014-PT | 2d | 2027-05-05 | 2027-05-08 | RHD4ENSDZ4APPPT130, RHD4CZ4L014PT1100 |  | -149.02d |
| RHD4CZ4L014PT2201 |  | PC works for Wash out Valve Chambers for Potable Water Network - (RD-L-14)-Z4-L014-PT | 2d | 2027-05-08 | 2027-05-10 | RHD4CZ4L014PT2101 |  | -138.02d |
| RHD4CZ4L014PT2301 |  | Installation for Wash out Valve Chambers for Potable Water Network - (RD-L-14)-Z4-L014-PT | 2d | 2027-05-10 | 2027-05-12 | RHD4CZ4L014PT2201, RHD4PRSHLDOSPT1100, RHD4PRSHLDOSPT1400, RHD4PRSHLSTAGPT1100, RHD4PRSHLSTAGPT1400 |  | -138.02d |
| RHD4CZ4L014PT2401 |  | Backfilling works for Wash out Valve Chambers for Potable Water Network - (RD-L-14)-Z4-L014-PT | 2d | 2027-05-12 | 2027-05-19 | RHD4CZ4L014PT2301 |  | -138.02d |
|  | 2507 | **RHD4-02-002-L014-(PT)-Wash out Valves** |  | 2027-05-12 | 2027-05-22 |  |  |  |
| RHD4CZ4L014PT3102 |  | Installation for Wash out Valves for Potable Water Network - (RD-L-14)-Z4-L014-PT | 2d | 2027-05-12 | 2027-05-19 | RHD4CZ4L014PT2301, RHD4PRSHLDOSPT1200, RHD4PRSHLSTAGPT1200 |  | -138.02d |
| RHD4CZ4L014PT3202 |  | Stem and Service box for Wash out Valves for Potable Water Network - (RD-L-14)-Z4-L014-PT | 2d | 2027-05-19 | 2027-05-22 | RHD4CZ4L014PT3102, RHD4CZ4L014PT2401, RHD4PRSHLDOSPT1300, RHD4PRSHLSTAGPT1300 |  | -138.02d |
|  | 2508 | **RHD4-02-002-L014-(PT)-Air Valve Chambers** |  | 2027-05-08 | 2027-05-22 |  |  |  |
| RHD4CZ4L014PT2102 |  | Excavation and Bedding for Air Valve Chambers for Potable Water Network - (RD-L-14)-Z4-L014-PT | 2d | 2027-05-08 | 2027-05-10 | RHD4ENSDZ4APPPT130, RHD4CZ4L014PT2101 |  | -149.02d |
| RHD4CZ4L014PT2202 |  | PC works for Air Valve Chambers for Potable Water Network - (RD-L-14)-Z4-L014-PT | 2d | 2027-05-10 | 2027-05-12 | RHD4CZ4L014PT2102 |  | -149.02d |
| RHD4CZ4L014PT2302 |  | Installation for Air Valve Chambers for Potable Water Network - (RD-L-14)-Z4-L014-PT | 2d | 2027-05-12 | 2027-05-19 | RHD4CZ4L014PT2202, RHD4PRSHLDOSPT1100, RHD4PRSHLDOSPT1400, RHD4PRSHLSTAGPT1100, RHD4PRSHLSTAGPT1400 |  | -149.02d |
| RHD4CZ4L014PT2402 |  | Backfilling works for Air Valve Chambers for Potable Water Network - (RD-L-14)-Z4-L014-PT | 2d | 2027-05-19 | 2027-05-22 | RHD4CZ4L014PT2302 |  | -149.02d |
|  | 2509 | **RHD4-02-002-L014-(PT)-Air Valves** |  | 2027-05-19 | 2027-05-24 |  |  |  |
| RHD4CZ4L014PT3103 |  | Installation for Air Valves for Potable Water Network - (RD-L-14)-Z4-L014-PT | 2d | 2027-05-19 | 2027-05-22 | RHD4CZ4L014PT2302, RHD4PRSHLDOSPT1200, RHD4PRSHLSTAGPT1200 |  | -149.02d |
| RHD4CZ4L014PT3203 |  | Stem and Service box for Air Valves for Potable Water Network - (RD-L-14)-Z4-L014-PT | 2d | 2027-05-22 | 2027-05-24 | RHD4CZ4L014PT3103, RHD4CZ4L014PT2402, RHD4PRSHLDOSPT1300, RHD4PRSHLSTAGPT1300 |  | -149.02d |
|  | 2510 | **RHD4-02-002-L014-(PT)-Fire Hydrant** |  | 2027-07-01 | 2027-08-05 |  |  |  |
| RHD4CZ4L014PT4100 |  | Excavation and Bedding and Pipe Installation for Fire Hydrant - (RD-L-14)-Z4-L014-PT | 8d | 2027-07-01 | 2027-07-11 | RHD4CZ4L014PT1501, RHD4ENSDZ4APPPT130 |  | -138.02d |
| RHD4CZ4L014PT4200 |  | Valve Installation for Fire Hydrant - (RD-L-14)-Z4-L014-PT | 6d | 2027-07-11 | 2027-07-18 | RHD4CZ4L014PT4100 |  | -138.02d |
| RHD4CZ4L014PT4300 |  | Stem for Fire Hydrant - (RD-L-14)-Z4-L014-PT | 6d | 2027-07-18 | 2027-07-25 | RHD4CZ4L014PT4200 |  | -138.02d |
| RHD4CZ4L014PT4400 |  | Fire Installation for Fire Hydrant - (RD-L-14)-Z4-L014-PT | 6d | 2027-07-25 | 2027-08-01 | RHD4CZ4L014PT4300, RHD4PRSHLDOSPT1500, RHD4PRSHLSTAGPT1500, RHD4CZ4L014PT3203, RHD4CZ4L014PT3202, RHD4CZ4L014PT3200 |  | -138.02d |
| RHD4CZ4L014PT4500 |  | Protection Barriers for Fire Hydrant - (RD-L-14)-Z4-L014-PT | 4d | 2027-08-01 | 2027-08-05 | RHD4CZ4L014PT4400 |  | -138.02d |
|  | 2511 | **RHD4-02-002-L014-(PT)-Concrete Encasement** |  |  |  |  |  |  |
|  | 2512 | **RHD4-02-002-Z4-L014-Irrigation Network - IRR** |  | 2027-05-05 | 2027-07-05 |  |  |  |
|  | 2513 | **RHD4-02-002-L014-(IRR)-HDPE Pipes - 160 mm diameter** |  | 2027-05-20 | 2027-06-13 |  |  |  |
| RHD4CZ4L014IRR1100 |  | Excavation works for HDPE Pipline 160 mm - (RD-L-14)-Z4-L014-IRR | 5d | 2027-05-20 | 2027-05-26 | RHD4CZ4L014PT1101, RHD4ENSDZ4APPIRR140, RHD4ENMSRR2000, RHD4CZ4L014PT1100 |  | -149.02d |
| RHD4CZ4L014IRR1200 |  | Bedding works for HDPE Pipline 160 mm - (RD-L-14)-Z4-L014-IRR | 4d | 2027-05-26 | 2027-05-31 | RHD4CZ4L014IRR1100 |  | -149.02d |
| RHD4CZ4L014IRR1300 |  | Installing for HDPE Pipline 160 mm - (RD-L-14)-Z4-L014-IRR | 5d | 2027-05-31 | 2027-06-06 | RHD4CZ4L014IRR1200, RHD4PRSHLDOSIRR1000, RHD4PRSHLSTAGIRR1000 |  | -149.02d |
| RHD4CZ4L014IRR1400 |  | Primary Test for HDPE Pipline 160 mm - (RD-L-14)-Z4-L014-IRR | 2d | 2027-06-06 | 2027-06-08 | RHD4CZ4L014IRR1300 |  | -149.02d |
| RHD4CZ4L014IRR1500 |  | Backfilling and warning tape works for HDPE Pipline 160 mm - (RD-L-14)-Z4-L014-IRR | 4d | 2027-06-08 | 2027-06-13 | RHD4CZ4L014IRR1400 |  | -149.02d |
|  | 1770 | **RHD4-02-002-L014-(IRR)-Air Valves** |  | 2027-05-31 | 2027-06-05 |  |  |  |
| RHD4CZ4L014IRR3103 |  | Installation for Air Valves for Irrigation Network - (RD-L-14)-Z4-L014-IRR | 2d | 2027-05-31 | 2027-06-02 | RHD4CZ4L014IRR2302 |  | -149.02d |
| RHD4CZ4L014IRR3203 |  | Stem and Service box for Air Valves for Irrigation Network - (RD-L-14)-Z4-L014-IRR | 2d | 2027-06-02 | 2027-06-05 | RHD4CZ4L014IRR3103, RHD4CZ4L014IRR2402 |  | -149.02d |
|  | 2515 | **RHD4-02-002-L014-(IRR)-HDPE Pipes - 200 mm diameter** |  |  |  |  |  |  |

| ID | WBS | Task | Duration | Start | Finish | Predecessors | Total float |
| --- | --- | --- | --- | --- | --- | --- | --- |
|  | 2516 | **RHD4-02-002-L014-(IRR)-HDPE Pipes - 250 mm diameter** |  | 2027-05-05 | 2027-07-05 |  |  |
| RHD4CZ4L014IRR1103 |  | Excavation works for HDPE Pipline 250 mm - (RD-L-14)-Z4-L014-IRR | 10d | 2027-05-05 | 2027-05-22 | RHD4ENSDZ4APPIRR140, RHD4ENMSRR2000, RHD4CZ4L014PT1100 | -170.02d |
| RHD4CZ4L014IRR1203 |  | Bedding works for HDPE Pipline 250 mm - (RD-L-14)-Z4-L014-IRR | 8d | 2027-05-22 | 2027-05-31 | RHD4CZ4L014IRR1103 | -148.02d |
| RHD4CZ4L014IRR1303 |  | Installing for HDPE Pipline 250 mm - (RD-L-14)-Z4-L014-IRR | 10d | 2027-05-31 | 2027-06-12 | RHD4CZ4L014IRR1203, RHD4PRSHLDOSIRR1000, RHD4PRSHLSTAGIRR1000 | -148.02d |
| RHD4CZ4L014IRR1403 |  | Primary Test for HDPE Pipline 250 mm - (RD-L-14)-Z4-L014-IRR | 8d | 2027-06-16 | 2027-06-26 | RHD4CZ4L014IRR1303, RHD4CZ4L014IRR5100 | -146.02d |
| RHD4CZ4L014IRR1503 |  | Backfilling and warning tape works for HDPE Pipline 250 mm - (RD-L-14)-Z4-L014-IRR | 8d | 2027-06-26 | 2027-07-05 | RHD4CZ4L014IRR1403 | -146.02d |
|  | 2521 | **RHD4-02-002-L014-(IRR)-Gate Valves (Direct Buried)** |  | 2027-06-07 | 2027-06-17 |  |  |
| RHD4CZ4L014IRR3100 |  | Installation for Direct Buried Gate Valves - (RD-L-14)-Z4-L014-IRR | 4d | 2027-06-07 | 2027-06-12 | RHD4CZ4L014IRR1303 SS, RHD4CZ4L014IRR1303 FF, RHD4CZ4L014IRR1300 SS, RHD4CZ4L014IRR1300 FF, RHD4PRSHLDOSIRR1100, RHD4PRSHLSTAGIRR1100 | -148.02d |
| RHD4CZ4L014IRR3200 |  | Stem and Service box for Direct Buried Gate Valves - (RD-L-14)-Z4-L014-IRR | 4d | 2027-06-13 | 2027-06-17 | RHD4CZ4L014IRR3100, RHD4CZ4L014IRR1500, RHD4PRSHLDOSIRR1300, RHD4PRSHLSTAGIRR1300 | -149.02d |
|  | 2528 | **RHD4-02-002-L014-(IRR)-Concrete Encasement** |  | 2027-05-31 | 2027-06-16 |  |  |
| RHD4CZ4L014IRR5100 |  | Pipe Encasement for Irrigation Pipelines - (RD-L-14)-Z4-L014-IRR | 14d | 2027-05-31 | 2027-06-16 | RHD4CZ4L014IRR1303 SS, RHD4CZ4L014IRR1300 SS, RHD4CZ4L014IRR1303 FF, RHD4CZ4L014IRR1300 FF, RHD4CZ4L014IRR1203, RHD4CZ4L014IRR1200 | -146.02d |
|  | 6685 | **RHD4-02-002-L014-(IRR)-Wash out Chamber** |  | 2027-05-22 | 2027-05-31 |  |  |
| RHD4CZ4L014IRR2101 |  | Excavation and Bedding for Wash out Chamber for Irrigation Network - (RD-L-14)-Z4-L014-IRR | 2d | 2027-05-22 | 2027-05-24 | RHD4CZ4L014IRR1103 | -170.02d |
| RHD4CZ4L014IRR2201 |  | PC works for Wash out Chamber for Irrigation Network - (RD-L-14)-Z4-L014-IRR | 2d | 2027-05-24 | 2027-05-26 | RHD4CZ4L014IRR2101 | -170.02d |
| RHD4CZ4L014IRR2301 |  | Installation for Wash out Chamber for Irrigation Network - (RD-L-14)-Z4-L014-IRR | 2d | 2027-05-26 | 2027-05-29 | RHD4CZ4L014IRR2201 | -170.02d |
| RHD4CZ4L014IRR2401 |  | Backfilling works for Wash out Chamber for Irrigation Network - (RD-L-14)-Z4-L014-IRR | 2d | 2027-05-29 | 2027-05-31 | RHD4CZ4L014IRR2301 | -170.02d |
|  | 6686 | **RHD4-02-002-L014-(IRR)-Wash out Valves** |  | 2027-05-29 | 2027-06-02 |  |  |
| RHD4CZ4L014IRR3102 |  | Installation for Wash out Valve for Irrigation Network - (RD-L-14)-Z4-L014-IRR | 2d | 2027-05-29 | 2027-05-31 | RHD4CZ4L014IRR2301 | -138.02d |
| RHD4CZ4L014IRR3202 |  | Stem and Service box for Wash out Valve for Irrigation Network - (RD-L-14)-Z4-L014-IRR | 2d | 2027-05-31 | 2027-06-02 | RHD4CZ4L014PT1500, RHD4CZ4L014IRR3102, RHD4CZ4L014IRR2401 | -138.02d |
|  | 1769 | **RHD4-02-002-L014-(IRR)-Air Valve Chamber** |  | 2027-05-24 | 2027-06-02 |  |  |
| RHD4CZ4L014IRR2102 |  | Excavation and Bedding for Valve Chamber for Irrigation Network - (RD-L-14)-Z4-L014-IRR | 2d | 2027-05-24 | 2027-05-26 | RHD4CZ4L014IRR2101 | -149.02d |
| RHD4CZ4L014IRR2202 |  | PC works for Valve Chamber for Irrigation Network - (RD-L-14)-Z4-L014-IRR | 2d | 2027-05-26 | 2027-05-29 | RHD4CZ4L014IRR2102 | -149.02d |
| RHD4CZ4L014IRR2302 |  | Installation for Valve Chamber for Irrigation Network - (RD-L-14)-Z4-L014-IRR | 2d | 2027-05-29 | 2027-05-31 | RHD4CZ4L014IRR2202 | -149.02d |
| RHD4CZ4L014IRR2402 |  | Backfilling works for Valve Chamber for Irrigation Network - (RD-L-14)-Z4-L014-IRR | 2d | 2027-05-31 | 2027-06-02 | RHD4CZ4L014IRR2302 | -149.02d |
|  | 2546 | **RHD4-02-002-Z4-L014-Medium Voltage Network - MV** |  | 2027-05-31 | 2027-08-04 |  |  |
|  | 2547 | **RHD4-02-002-L014-(MV)-Medium Voltage cable trench** |  | 2027-05-31 | 2027-07-14 |  |  |
| RHD4CZ4L014MV1100 |  | Excavation for Medium Voltage Trench - (RD-L-14)-Z4-L014-MV | 8d | 2027-05-31 | 2027-06-09 | RHD4ENSDZ4APPMV150, RHD4CZ4L014ST3102, RHD4CZ4L014RD3100, RHD4CZ4L014IRR2401 | -170.02d |
| RHD4CZ4L014MV1200 |  | Trench Backfilling for Medium Voltage Network - (RD-L-14)-Z4-L014-MV | 8d | 2027-07-05 | 2027-07-14 | RHD4CZ4L014MV3200, RHD4CZ4L014MV3101 | -170.02d |
|  | 2548 | **RHD4-02-002-L014-(MV)-Medium Voltage duct banks** |  | 2027-06-09 | 2027-06-23 |  |  |
| RHD4CZ4L014MV2100 |  | Excavation of Duct Banks for Medium Voltage Network - (RD-L-14)-Z4-L014-MV | 3d | 2027-06-09 | 2027-06-13 | RHD4ENSDZ4APPMV150, RHD4CZ4L014MV1100 | -142.02d |
| RHD4CZ4L014MV2200 |  | Installation of Duct Banks for Medium Voltage Network - (RD-L-14)-Z4-L014-MV | 4d | 2027-06-13 | 2027-06-17 | RHD4CZ4L014MV2100, RHD4PRSHLDOSMV1000, RHD4PRSHLSTAGMV1000 | -123.02d |
| RHD4CZ4L014MV2300 |  | Pouring of Duct Banks for Medium Voltage Network - (RD-L-14)-Z4-L014-MV | 3d | 2027-06-17 | 2027-06-21 | RHD4CZ4L014MV2200 | -123.02d |
| RHD4CZ4L014MV2400 |  | Backfilling of Duct Banks for Medium Voltage Network - (RD-L-14)-Z4-L014-MV | 2d | 2027-06-21 | 2027-06-23 | RHD4CZ4L014MV2300 | -123.02d |
|  | 2549 | **RHD4-02-002-L014-(MV)-Medium Voltage cables 3Cx 500 mm²** |  | 2027-06-09 | 2027-08-04 |  |  |
| RHD4CZ4L014MV3100 |  | Installation of Medium Voltage Cables 3Cx 500 mm² - (RD-L-14)-Z4-L014-MV | 16d | 2027-06-09 | 2027-06-28 | RHD4CZ4L014MV1100, RHD4PRSHLDOSMV1100, RHD4ENMSMV2000, RHD4ENMSMV2010, RHD4PRSHLSTAGMV1100 | -170.02d |
| RHD4CZ4L014MV3200 |  | Joints Installation of Medium Voltage Cables 3Cx 500 mm² - (RD-L-14)-Z4-L014-MV | 6d | 2027-06-28 | 2027-07-05 | RHD4CZ4L014MV3100, RHD4PRSHLDOSMV1300, RHD4PRSHLSTAGMV1300 | -170.02d |
| RHD4CZ4L014MV3300 |  | Testing of Medium Voltage Cables 3Cx 500 mm² - (RD-L-14)-Z4-L014-MV | 16d | 2027-07-14 | 2027-08-02 | RHD4CZ4L014MV3200, RHD4CZ4L014MV1200, RHD4CZ4L014MV4200 | -170.02d |
| RHD4CZ4L014MV3400 |  | Termination of Medium Voltage Cables 3Cx 500 mm² - (RD-L-14)-Z4-L014-MV | 2d | 2027-08-02 | 2027-08-04 | RHD4CZ4L014MV3300 | -170.02d |
|  | 2550 | **RHD4-02-002-L014-(MV)-Medium Voltage cables 3Cx 50 mm²** |  | 2027-06-09 | 2027-07-19 |  |  |
| RHD4CZ4L014MV3101 |  | Installation of Medium Voltage Cables 3Cx 50 mm² - (RD-L-14)-Z4-L014-MV | 2d | 2027-06-09 | 2027-06-12 | RHD4CZ4L014MV1100, RHD4PRSHLDOSMV1200, RHD4ENMSMV2000, RHD4ENMSMV2010, RHD4PRSHLSTAGMV1200 | -150.02d |
| RHD4CZ4L014MV3301 |  | Testing of Medium Voltage Cables 3Cx 50 mm² - (RD-L-14)-Z4-L014-MV | 2d | 2027-07-14 | 2027-07-17 | RHD4CZ4L014MV3101, RHD4CZ4L014MV1200 | -156.02d |
| RHD4CZ4L014MV3401 |  | Termination of Medium Voltage Cables 3Cx 50 mm² - (RD-L-14)-Z4-L014-MV | 2d | 2027-07-17 | 2027-07-19 | RHD4CZ4L014MV3301 | -156.02d |
|  | 2551 | **RHD4-02-002-L014-(MV)-Normally open Point (Outdoor Type)** |  | 2027-06-26 | 2027-06-30 |  |  |
| RHD4CZ4L014MV4100 |  | Installation for Normally open Point - (RD-L-14)-Z4-L014-MV | 2d | 2027-06-26 | 2027-06-28 | RHD4CZ4L014MV3101 SS, RHD4CZ4L014MV3100 FF, RHD4PRSHLDOSMV1400, RHD4PRSHLSTAGMV1400 | -158.02d |
| RHD4CZ4L014MV4200 |  | Termination for Normally open Point - (RD-L-14)-Z4-L014-MV | 2d | 2027-06-28 | 2027-06-30 | RHD4CZ4L014MV4100 | -158.02d |
|  | 2552 | **RHD4-02-002-L014-(MV)-Unit Substations** |  | 2027-07-14 | 2027-07-29 |  |  |
| RHD4CZ4L014MV5100 |  | Excavation for Unit Substations for Medium Voltage Network - (RD-L-14)-Z4-L014-MV | 2d | 2027-07-14 | 2027-07-17 | RHD4CZ4L014MV1200, RHD4ENSDZ4APPMV150 | -154.02d |
| RHD4CZ4L014MV5200 |  | Concrete Base Placement for Unit Substations for Medium Voltage Network - (RD-L-14)-Z4-L014-MV | 2d | 2027-07-17 | 2027-07-19 | RHD4CZ4L014MV5100 | -154.02d |
| RHD4CZ4L014MV5300 |  | Installation for Fences and doors for Medium Voltage Network - (RD-L-14)-Z4-L014-MV | 5d | 2027-07-19 | 2027-07-25 | RHD4CZ4L014MV5200 | -154.02d |
| RHD4CZ4L014MV5400 |  | Installation for Unit Substations for Medium Voltage Network - (RD-L-14)-Z4-L014-MV | 4d | 2027-07-25 | 2027-07-29 | RHD4CZ4L014MV5300 | -154.02d |
|  | 2553 | **RHD4-02-002-Z4-L014-Low Voltage Network - LV** |  | 2027-06-13 | 2027-09-06 |  |  |
|  | 2554 | **RHD4-02-002-L014-(LV)-Low Voltage duct banks** |  | 2027-06-13 | 2027-07-03 |  |  |
| RHD4CZ4L014LV2100 |  | Excavation of Duct Banks for Low Voltage Network - (RD-L-14)-Z4-L014-LV | 4d | 2027-06-13 | 2027-06-17 | RHD4ENSDZ4APPLV160, RHD4PRSHLDOSLV1000, RHD4PRSHLSTAGLV1000, RHD4CZ4L014MV2100 | -142.02d |
| RHD4CZ4L014LV2200 |  | Installation of Duct Banks for Low Voltage Network - (RD-L-14)-Z4-L014-LV | 6d | 2027-06-17 | 2027-06-24 | RHD4CZ4L014LV2100 | -142.02d |
| RHD4CZ4L014LV2300 |  | Pouring of Duct Banks for Low Voltage Network - (RD-L-14)-Z4-L014-LV | 4d | 2027-06-24 | 2027-06-29 | RHD4CZ4L014LV2200 | -142.02d |
| RHD4CZ4L014LV2400 |  | Backfilling of Duct Banks for Low Voltage Network - (RD-L-14)-Z4-L014-LV | 3d | 2027-06-29 | 2027-07-03 | RHD4CZ4L014LV2300 | -142.02d |
|  | 2555 | **RHD4-02-002-L014-(LV)-Low Voltage Drawpit** |  | 2027-08-15 | 2027-08-19 |  |  |
| RHD4CZ4L014LV5100 |  | Excavation of Drawpit size 900x900x1000mm for Low Voltage Network - (RD-L-14)-Z4-L014-LV | 2d | 2027-08-15 | 2027-08-17 | RHD4CZ4L014LV2300, RHD4ENSDZ4APPLV160, RHD4CZ4L014LV3100 | -170.02d |
| RHD4CZ4L014LV5200 |  | Installation of Drawpit size 900x900x1000mm for Low Voltage Network - (RD-L-14)-Z4-L014-LV | 2d | 2027-08-17 | 2027-08-19 | RHD4CZ4L014LV5100, RHD4PRSHLDOSLV1400, RHD4PRSHLSTAGLV1400, RHD4CZ4L014SW3500 | -158.02d |
|  | 2556 | **RHD4-02-002-L014-(LV)-Low Voltage cables** |  | 2027-08-04 | 2027-09-06 |  |  |
| RHD4CZ4L014LV3100 |  | Excavation for Low Voltage Cables for Low Voltage Network - (RD-L-14)-Z4-L014-LV | 9d | 2027-08-04 | 2027-08-15 | RHD4CZ4L014LV2400, RHD4CZ4L014MV1200, RHD4ENSDZ4APPLV160, RHD4CZ4L014MV3401, RHD4CZ4L014MV3400 | -170.02d |
| RHD4CZ4L014LV3200 |  | Cable Laying of Low Voltage Cables for Low Voltage Network - (RD-L-14)-Z4-L014-LV | 7d | 2027-08-15 | 2027-08-23 | RHD4CZ4L014LV3100, RHD4PRSHLDOSLV1100, RHD4ENMSLV2000, RHD4ENMSLV2010, RHD4PRSHLSTAGLV1100 | -145.02d |
| RHD4CZ4L014LV3300 |  | Warning tape and Backfill for Low Voltage Cables for Low Voltage Network - (RD-L-14)-Z4-L014-LV | 7d | 2027-08-23 | 2027-08-31 | RHD4CZ4L014LV3200 | -145.02d |
| RHD4CZ4L014LV3400 |  | Testing of Low Voltage Cables for Low Voltage Network - (RD-L-14)-Z4-L014-LV | 5d | 2027-08-31 | 2027-09-06 | RHD4CZ4L014LV3300 | -145.02d |
|  | 2557 | **RHD4-02-002-L014-(LV)-Low Voltage Distribution Pillars** |  |  |  |  |  |
|  | 2558 | **RHD4-02-002-L014-(LV)-Low Voltage Distribution Pillars Earthing** |  |  |  |  |  |
|  | 2559 | **RHD4-02-002-Z4-L014-Street Lighting Network - SL** |  | 2027-06-17 | 2027-11-08 |  |  |
|  | 2560 | **RHD4-02-002-L014-(SL)-Street Lighting duct banks** |  | 2027-06-17 | 2027-07-10 |  |  |
| RHD4CZ4L014SL2100 |  | Excavation of Duct Banks for Street Lighting Network - (RD-L-14)-Z4-L014-SL | 3d | 2027-06-17 | 2027-06-21 | RHD4CZ4L014LV2100, RHD4ENSDZ4APPSL170 | -128.02d |
| RHD4CZ4L014SL2200 |  | Installation of Duct Banks for Street Lighting Network - (RD-L-14)-Z4-L014-SL | 4d | 2027-06-24 | 2027-06-29 | RHD4CZ4L014SL2100, RHD4CZ4L014LV2200, RHD4PRSHLDOSSL1000, RHD4PRSHLSTAGSL1000 | -131.02d |

| ID | WBS | Task | Duration | Start | Finish | Predecessors | Total float |
| --- | --- | --- | --- | --- | --- | --- | --- |
| RHD4CZ4L014SL2300 |  | Pouring of Duct Banks for Street Lighting Network - (RD-L-14)-Z4-L014-SL | 3d | 2027-06-29 | 2027-07-03 | RHD4CZ4L014SL2200, RHD4CZ4L014LV2300 | -131.02d |
| RHD4CZ4L014SL2400 |  | Backfilling of Duct Banks for Street Lighting Network - (RD-L-14)-Z4-L014-SL | 6d | 2027-07-03 | 2027-07-10 | RHD4CZ4L014SL2300, RHD4CZ4L014LV2400 | -111.02d |
|  | 2561 | **RHD4-02-002-L014-(SL)-Street Lighting Drawpit** |  | 2027-08-17 | 2027-08-22 |  |  |
| RHD4CZ4L014SL5100 |  | Excavation of Drawpit size 600x600x900mm for Street Lighting Network - (RD-L-14)-Z4-L014-SL | 2d | 2027-08-17 | 2027-08-19 | RHD4CZ4L014SL2300, RHD4ENSDZ4APPSL170, RHD4CZ4L014LV5100 | -170.02d |
| RHD4CZ4L014SL5200 |  | Installation of Drawpit size 600x600x900mm for Street Lighting Network - (RD-L-14)-Z4-L014-SL | 2d | 2027-08-19 | 2027-08-22 | RHD4CZ4L014SL5100, RHD4PRSHLDOSSL1400, RHD4PRSHLSTAGSL1400, RHD4CZ4L014LV5200 | -158.02d |
|  | 2562 | **RHD4-02-002-L014-(SL)-Street Lighting cables** |  | 2027-08-17 | 2027-10-16 |  |  |
| RHD4CZ4L014SL3100 |  | Excavation for Street Lighting Cables for Street Lighting Network - (RD-L-14)-Z4-L014-SL | 16d | 2027-08-17 | 2027-09-05 | RHD4ENSDZ4APPSL170, RHD4CZ4L014SL5100 SS, RHD4CZ4L014MV2400, RHD4CZ4L014MV5400 | -170.02d |
| RHD4CZ4L014SL3200 |  | Cable Laying of Street Lighting Cables for Street Lighting Network - (RD-L-14)-Z4-L014-SL | 13d | 2027-09-05 | 2027-09-20 | RHD4CZ4L014SL3100, RHD4PRSHLDOSSL1100, RHD4ENMSSL2000, RHD4ENMSSL2010, RHD4PRSHLSTAGSL1100, RHD4CZ4L014LV5200, RHD4CZ4L014SL5200 | -170.02d |
| RHD4CZ4L014SL3300 |  | Warning tape and Backfill for Street Lighting Cables for Street Lighting Network - (RD-L-14)-Z4-L014-SL | 13d | 2027-09-20 | 2027-10-06 | RHD4CZ4L014SL3200 | -170.02d |
| RHD4CZ4L014SL3400 |  | Testing of Street Lighting Cables for Street Lighting Network - (RD-L-14)-Z4-L014-SL | 8d | 2027-10-06 | 2027-10-16 | RHD4CZ4L014SL3300, RHD4CZ4L014LV3400 | -170.02d |
|  | 2563 | **RHD4-02-002-L014-(SL)-Street Lighting Poles** |  | 2027-07-14 | 2027-11-08 |  |  |
| RHD4CZ4L014SL1100 |  | Excavation for RC Base for Lighting Poles for Street Lighting Network - (RD-L-14)-Z4-L014-SL | 8d | 2027-07-14 | 2027-07-24 | RHD4CZ4L014SL2400, RHD4CZ4L014MV1200, RHD4ENSDZ4APPSL170, RHD4CZ4C031SL1100 | -115.02d |
| RHD4CZ4L014SL1200 |  | Installation for RC Base for Lighting Poles for Street Lighting Network - (RD-L-14)-Z4-L014-SL | 8d | 2027-07-24 | 2027-08-02 | RHD4CZ4L014SL1100 | -115.02d |
| RHD4CZ4L014SL1300 |  | Backfill for RC Base for Lighting Poles for Street Lighting Network - (RD-L-14)-Z4-L014-SL | 8d | 2027-08-25 | 2027-09-04 | RHD4CZ4L014SL1200, RHD4CZ4L014MV4100, RHD4CZ4L014PT4500, RHD4CZ4L09MV4100, RHD4CZ4L014MV4200, RHD4CZ4L01SL1500 | -135.02d |
| RHD4CZ4L014SL1400 |  | Installation for Lighting Poles for Street Lighting Network - (RD-L-14)-Z4-L014-SL | 12d | 2027-10-16 | 2027-10-30 | RHD4CZ4L014SL1300, RHD4CZ4L014SL3400, RHD4PRSHLDOSSL1200, RHD4ENMSSL2000, RHD4ENMSSL2010, RHD4PRSHLSTAGSL1200 | -170.02d |
| RHD4CZ4L014SL1500 |  | Luminaire Installation for Lighting Poles for Street Lighting Network - (RD-L-14)-Z4-L014-SL | 8d | 2027-10-30 | 2027-11-08 | RHD4CZ4L014SL1400, RHD4PRSHLDOSSL1300, RHD4PRSHLSTAGSL1300 | -170.02d |
|  | 2564 | **RHD4-02-002-L014-(SL)-Street Lighting Feeder Pillars** |  | 2027-10-06 | 2027-11-01 |  |  |
| RHD4CZ4L014SL4100 |  | Leveling for Distribution Pillars for Street Lighting Network - (RD-L-14)-Z4-L014-SL | 2d | 2027-10-06 | 2027-10-09 | RHD4CZ4L014SL3300, RHD4CZ4RA02RD9100 | -150.02d |
| RHD4CZ4L014SL4200 |  | Lean Concrete for Distribution Pillars for Street Lighting Network - (RD-L-14)-Z4-L014-SL | 2d | 2027-10-09 | 2027-10-11 | RHD4CZ4L014SL4100 | -150.02d |
| RHD4CZ4L014SL4300 |  | Installation of Distribution Pillars for Street Lighting Network - (RD-L-14)-Z4-L014-SL | 2d | 2027-10-30 | 2027-11-01 | RHD4CZ4L014SL4200, RHD4CZ4L014SL1400 | -166.02d |
|  | 2565 | **RHD4-02-002-L014-(SL)-Street Lighting Earthing System** |  | 2027-11-01 | 2027-11-03 |  |  |
| RHD4CZ4L014SL6100 |  | Installation of Earthing for Lighting Poles and Fedder Pillers for Street Lighting Network - (RD-L-14)-Z4-L014-SL | 2d | 2027-11-01 | 2027-11-03 | RHD4CZ4L014SL4300, RHD4ENMSER2000, RHD4ENMSER2010, RHD4CZ4A013MV3401, RHD4CZ5L08MV2400, RHD4CZ5L08MV3401, RHD4CZ5L08MV4200 | -166.02d |
|  | 2571 | **RHD4-02-002-Z4-L014-Telecommunications Network - TC** |  | 2027-02-02 | 2027-11-29 |  |  |
|  | 2572 | **RHD4-02-002-L014-(TC)-Telecommunications Ducts** |  | 2027-10-06 | 2027-11-29 |  |  |
| RHD4CZ4L014TC2100 |  | Excavation of HDPE Ducts for Telecom Network - (RD-L-14)-Z4-L014-TC | 12d | 2027-10-06 | 2027-10-20 | RHD4CZ4L014TC3400, RHD4CZ4L014SL3300, RHD4ENSDZ4APPTC190, RHD4CZ4L014LV3300 | -127.02d |
| RHD4CZ4L014TC2200 |  | Installation of HDPE Ducts for Telecom Network - (RD-L-14)-Z4-L014-TC | 12d | 2027-10-20 | 2027-11-03 | RHD4CZ4L014TC2100, RHD4PRSHLDOSTC1000, RHD4PRSHLSTAGTC1000 | -117.02d |
| RHD4CZ4L014TC2400 |  | Backfilling of HDPE Ducts for Telecom Network - (RD-L-14)-Z4-L014-TC | 12d | 2027-11-15 | 2027-11-29 | RHD4CZ4L014TC2200, RHD4CZ4L014TC5200 | -127.02d |
|  | 2573 | **RHD4-02-002-L014-(TC)-Telecommunications Manholes** |  | 2027-10-20 | 2027-11-15 |  |  |
| RHD4CZ4L014TC5100 |  | Excavation for Manholes for Telecom Network - (RD-L-14)-Z4-L014-TC | 11d | 2027-10-20 | 2027-11-02 | RHD4CZ4L014TC2100, RHD4ENSDZ4APPTC190, RHD4CZ4L01RD8100 | -127.02d |
| RHD4CZ4L014TC5200 |  | Installation of Manholes for Telecom Network - (RD-L-14)-Z4-L014-TC | 11d | 2027-11-02 | 2027-11-15 | RHD4CZ4L014TC5100, RHD4CZ4L014TC2200 SS, RHD4PRSHLDOSTC1200, RHD4PRSHLSTAGTC1200 | -127.02d |
|  | 2574 | **RHD4-02-002-L014-(TC)-Telecomminications Road Crossings** |  | 2027-02-02 | 2027-02-21 |  |  |
| RHD4CZ4L014TC3100 |  | Excavation for Road Crossings for Telecom Network - (RD-L-14)-Z4-L014-TC | 2d | 2027-02-02 | 2027-02-03 | RHD4ENSDZ4APPTC190, RHD4CZ4L014ST1110 | -173d |
| RHD4CZ4L014TC3200 |  | Installation of Road Crossings for Telecom Network - (RD-L-14)-Z4-L014-TC | 2d | 2027-02-04 | 2027-02-06 | RHD4CZ4L014TC3100, RHD4PRSHLDOSTC1100, RHD4PRSHLSTAGTC1100 | -173d |
| RHD4CZ4L014TC3300 |  | Pouring of Road Crossings for Telecom Network - (RD-L-14)-Z4-L014-TC | 6d | 2027-02-07 | 2027-02-13 | RHD4CZ4L014TC3200 | -173d |
| RHD4CZ4L014TC3400 |  | Backfilling of Road Crossings for Telecom Network - (RD-L-14)-Z4-L014-TC | 7d | 2027-02-14 | 2027-02-21 | RHD4CZ4L014TC3300 | -173d |
|  | 2575 | **RHD4-02-002-Z4-L014-Information and Communication Technologies - ICT** |  | 2027-02-02 | 2027-12-01 |  |  |
|  | 2576 | **RHD4-02-002-L014-(ICT)-Information and Communication Technologies Ducts** |  | 2027-10-06 | 2027-12-01 |  |  |
| RHD4CZ4L014ICT2100 |  | Excavation of HDPE Ducts for ICT Network - (RD-L-14)-Z4-L014-ICT | 12d | 2027-10-06 | 2027-10-20 | RHD4CZ4L014ICT3400, RHD4CZ4L014SL3300, RHD4ENSDZ4APPICT200 | -129.02d |
| RHD4CZ4L014ICT2200 |  | Installation of HDPE Ducts for ICT Network - (RD-L-14)-Z4-L014-ICT | 12d | 2027-10-20 | 2027-11-03 | RHD4CZ4L014ICT2100, RHD4PRSHLDOSICT1000, RHD4PRSHLSTAGICT1000 | -117.02d |
| RHD4CZ4L014ICT2400 |  | Backfilling of HDPE Ducts for ICT Network - (RD-L-14)-Z4-L014-ICT | 12d | 2027-11-17 | 2027-12-01 | RHD4CZ4L014ICT2200, RHD4CZ4L014ICT5200 | -129.02d |
|  | 2577 | **RHD4-02-002-L014-(ICT)-Information and Communication Technologies Manholes** |  | 2027-10-20 | 2027-11-17 |  |  |
| RHD4CZ4L014ICT5100 |  | Excavation for Manholes for ICT Network - (RD-L-14)-Z4-L014-ICT | 12d | 2027-10-20 | 2027-11-03 | RHD4CZ4L014ICT2100, RHD4ENSDZ4APPICT200 | -129.02d |
| RHD4CZ4L014ICT5200 |  | Installation of Manholes for ICT Network - (RD-L-14)-Z4-L014-ICT | 12d | 2027-11-03 | 2027-11-17 | RHD4CZ4L014ICT5100, RHD4PRSHLDOSICT1200, RHD4PRSHLSTAGICT1200 | -129.02d |
|  | 2578 | **RHD4-02-002-L014-(ICT)-Information and Communication Technologies Road Crossings** |  | 2027-02-02 | 2027-03-08 |  |  |
| RHD4CZ4L014ICT3100 |  | Excavation for Road Crossings for ICT Network - (RD-L-14)-Z4-L014-ICT | 7d | 2027-02-02 | 2027-02-09 | RHD4ENSDZ4APPICT200, RHD4CZ4L014ST1110 | -182d |
| RHD4CZ4L014ICT3200 |  | Installation of Road Crossings for ICT Network - (RD-L-14)-Z4-L014-ICT | 7d | 2027-02-14 | 2027-02-21 | RHD4CZ4L014ICT3100, RHD4PRSHLDOSICT1100, RHD4PRSHLSTAGICT1100 | -185d |
| RHD4CZ4L014ICT3300 |  | Pouring of Road Crossings for ICT Network - (RD-L-14)-Z4-L014-ICT | 7d | 2027-02-23 | 2027-03-02 | RHD4CZ4L014ICT3200 | -185d |
| RHD4CZ4L014ICT3400 |  | Backfilling of Road Crossings for ICT Network - (RD-L-14)-Z4-L014-ICT | 5d | 2027-03-03 | 2027-03-08 | RHD4CZ4L014ICT3300 | -185d |
|  | 2566 | **RHD4-02-002-Z4-L014-Landscape Network - LS** |  |  |  |  |  |
|  | 2567 | **RHD4-02-002-L014-(LS)-Landscape Lighting cables** |  |  |  |  |  |
|  | 2568 | **RHD4-02-002-L014-(LS)-Landscape Feeder Pillars** |  |  |  |  |  |
|  | 2569 | **RHD4-02-002-L014-(LS)-Landscape Bollard Poles** |  |  |  |  |  |
|  | 2570 | **RHD4-02-002-L014-(LS)-Landscape Feeder Pillars Earthing** |  |  |  |  |  |
|  | 2579 | **RHD4-02-002-Z4-L014-Security Network - CCTV** |  | 2027-12-01 | 2028-01-15 |  |  |
|  | 2580 | **RHD4-02-002-L014-(CCTV)-Civil Works** |  | 2027-12-01 | 2027-12-13 |  |  |
| RHD4CZ4L014CCTV2100 |  | Civil Works for Security Network - (RD-L-14)-Z4-L014-CCTV | 10d | 2027-12-01 | 2027-12-13 | RHD4CZ4L014ICT2400, RHD4CZ4L014TC2400 | -129.02d |
|  | 2581 | **RHD4-02-002-L014-(CCTV)-CCTV Poles** |  | 2027-12-13 | 2027-12-25 |  |  |
| RHD4CZ4L014CCTV1100 |  | Excavation for RC Base for CCTV Poles for Security Network - (RD-L-14)-Z4-L014-CCTV | 2d | 2027-12-13 | 2027-12-15 | RHD4CZ4L014CCTV2100, RHD4ENSDZ4APPCCTV210 | -129.02d |
| RHD4CZ4L014CCTV1200 |  | Installation for RC Base for CCTV Poles for Security Network - (RD-L-14)-Z4-L014-CCTV | 2d | 2027-12-15 | 2027-12-18 | RHD4CZ4L014CCTV1100 | -129.02d |
| RHD4CZ4L014CCTV1300 |  | Backfill for RC Base for CCTV Poles for Security Network - (RD-L-14)-Z4-L014-CCTV | 2d | 2027-12-18 | 2027-12-20 | RHD4CZ4L014CCTV1200 | -129.02d |
| RHD4CZ4L014CCTV1400 |  | Installation for CCTV Poles for Security Network - (RD-L-14)-Z4-L014-CCTV | 2d | 2027-12-20 | 2027-12-22 | RHD4CZ4L014CCTV1300, RHD4PRSHLDOSCCTV1000, RHD4PRSHLSTACCTV1000, RHD4CZ5L08RD4100 | -129.02d |
| RHD4CZ4L014CCTV1500 |  | Protection post Installation for CCTV Poles for Security Network - (RD-L-14)-Z4-L014-CCTV | 2d | 2027-12-22 | 2027-12-25 | RHD4CZ4L014CCTV1400 | -129.02d |
|  | 2582 | **RHD4-02-002-L014-(CCTV)-Camera** |  | 2027-12-25 | 2027-12-27 |  |  |
| RHD4CZ4L014CCTV3100 |  | Installation for Cameras for Security Network - (RD-L-14)-Z4-L014-CCTV | 2d | 2027-12-25 | 2027-12-27 | RHD4CZ4L014CCTV1400, RHD4CZ4L014CCTV4100, RHD4PRSHLDOSCCTV1100, RHD4PRSHLSTACCTV1100 | -100.02d |
|  | 2583 | **RHD4-02-002-L014-(CCTV)-Power and Infrastructure** |  | 2027-12-22 | 2027-12-27 |  |  |
| RHD4CZ4L014CCTV4100 |  | Installation of Power outlet, UPS and midspan for PTZ Camerafor Cameras for Security Network - (RD-L-14)-Z4-L014-CCTV | 2d | 2027-12-22 | 2027-12-25 | RHD4CZ4L014CCTV1400, RHD4PRSHLDOSCCTV1300, RHD4PRSHLSTACCTV1300 | -129.02d |
| RHD4CZ4L014CCTV4200 |  | Short Range Wireless PoP wireless Bridgefor CCTV Poles for Security Network - (RD-L-12/2)-Z3-L122-CCTV | 2d | 2027-12-25 | 2027-12-27 | RHD4CZ4L014CCTV4100 | -100.02d |
|  | 2585 | **RHD4-02-002-L014-(CCTV)-CCTV Panels and Components** |  | 2027-12-27 | 2028-01-15 |  |  |
| RHD4CZ4L014CCTV6100 |  | Installation for CCTV Panels for Security Network - (RD-L-14)-Z4-L014-CCTV | 16d | 2027-12-27 | 2028-01-15 | RHD4CZ4L014CCTV3100, RHD4PRSHLDOSCCTV1200, RHD4PRSHLSTACCTV1200, RHD4PRLOLSTACCTV1001, RHD4CZ4L014CCTV4200 | -100.02d |
|  | 2596 | **RHD4-02-002-Z4-L09** |  | 2026-08-10 | 2027-12-27 |  |  |

| ID | WBS | Task | Duration | Start | Finish | Predecessors | Complete | Total float |
| --- | --- | --- | --- | --- | --- | --- | --- | --- |
|  | 2627 | **RHD4-02-002-Z4-L09-Crossings Sewage Network - SWCr** |  |  |  |  |  |  |
|  | 2637 | **RHD4-02-002-L09-(SWCr)-MH Works - 1200 mm diameter** |  |  |  |  |  |  |
|  | 2630 | **RHD4-02-002-L09-(SWCr)-GRP Pipes - 500 mm diameter** |  |  |  |  |  |  |
|  | 2633 | **RHD4-02-002-L09-(SWCr)-UPVC Pipes - 200 mm diameter** |  |  |  |  |  |  |
|  | 2647 | **RHD4-02-002-L09-(SWCr)-Discharge Chambers** |  |  |  |  |  |  |
|  | 2671 | **RHD4-02-002-Z4-L09-Crossings Potable Network - PTCr** |  |  |  |  |  |  |
|  | 2675 | **RHD4-02-002-L09-(PTCr)-HDPE Pipes - 400 mm diameter** |  |  |  |  |  |  |
|  | 2673 | **RHD4-02-002-L09-(PTCr)-HDPE Pipes - 160 mm diameter** |  |  |  |  |  |  |
|  | 2672 | **RHD4-02-002-L09-(PTCr)-HDPE Pipes - 110 mm diameter** |  |  |  |  |  |  |
|  | 2677 | **RHD4-02-002-L09-(PTCr)-Gate Valves (Direct Buried)** |  |  |  |  |  |  |
|  | 2678 | **RHD4-02-002-L09-(PTCr)-Butterfly Valve Chamber** |  |  |  |  |  |  |
|  | 2679 | **RHD4-02-002-L09-(PTCr)-Butterfly Valves** |  |  |  |  |  |  |
|  | 2775 | **RHD4-02-002-Z4-L09-Road Works - RD** |  | 2027-02-21 | 2027-12-27 |  |  |  |
|  | 2776 | **RHD4-02-002-L09-(RD)-Subgrade** |  | 2027-02-21 | 2027-03-07 |  |  |  |
| RHD4CZ4L09RD1100 |  | Supply, lay and compaction subgrade compacted thickness 300 mm for Roads - (RD-L-9)-Z4-L09-RD | 11d | 2027-02-21 | 2027-03-07 | RHD4CZ4L09RW4000, RHD4ENSDZ4APPEW100, RHD4ENSDZ4APPRD220, RHD4CZ4L09ST3302, RHD4CZ4L09ICT3400, RHD4CZ4L09TC3400 |  | -156.02d |
|  | 2777 | **RHD4-02-002-L09-(RD)-Aggregate Base Course** |  | 2027-03-07 | 2027-03-23 |  |  |  |
| RHD4CZ4L09RD2100 |  | Supply, lay and compaction Aggregate base course compacted thickness 300 mmfor Roads - (RD-L-9)-Z4-L09-RD | 11d | 2027-03-07 | 2027-03-23 | RHD4CZ4L09RD1100, RHD4PRSHLDOSRD1000, RHD4PRSHLSTAGRD1000 |  | -156.02d |
|  | 2778 | **RHD4-02-002-L09-(RD)-Bituminous base course Two Layers, including (MC1)&(RC2)** |  | 2027-04-05 | 2027-11-08 |  |  |  |
| RHD4CZ4L09RD3100 |  | Supply, lay and Asphaltic base course including Prime Coat (MC1) for 1st Layer - (RD-L-9)-Z4-L09-RD | 2d | 2027-04-05 | 2027-04-07 | RHD4CZ4L09RD2100, RHD4PRSHLDOSRD1100, RHD4ENMSASPH2000, RHD4ENMSASPH2010, RHD4PRSHLSTAGRD1100, RHD4CZ4L01RD3100 |  | -167.02d |
| RHD4CZ4L09RD3200 |  | Supply, lay and Asphaltic base course including Tack Coat (RC2) for 2nd Layer - (RD-L-9)-Z4-L09-RD | 2d | 2027-11-06 | 2027-11-08 | RHD4CZ4L09RD3100, RHD4PRSHLDOSRD1100, RHD4PRSHLSTAGRD1100, RHD4CZ4L09ICT2400 |  | -197.02d |
|  | 2780 | **RHD4-02-002-L09-(RD)-Precast Concrete Curb** |  | 2027-11-08 | 2027-11-21 |  |  |  |
| RHD4CZ4L09RD5100 |  | Supply and installation Precast Concrete Kerb for Roads - (RD-L-9)-Z4-L09-RD | 11d | 2027-11-08 | 2027-11-21 | RHD4PRSHLDOSRD1200, RHD4ENMSRD2000, RHD4ENMSRD2010, RHD4PRSHLSTAGRD1200, RHD4CZ4L09RD3200 |  | -197.02d |
|  | 2783 | **RHD4-02-002-L09-(RD)-Traffic Signage** |  | 2027-11-21 | 2027-11-30 |  |  |  |
| RHD4CZ4L09RD8100 |  | Installation of Traffic Signage for Road Network - (RD-L-9)-Z4-L09-RD | 8d | 2027-11-21 | 2027-11-30 | RHD4CZ4L09RD5100, RHD4PRSHLDOSRD1600, RHD4PRSHLSTAGRD1600 |  | -197.02d |
|  | 2781 | **RHD4-02-002-L09-(RD)-Precast Interlocking Block Pavers** |  | 2027-11-30 | 2027-12-20 |  |  |  |
| RHD4CZ4L09RD6100 |  | Interlocking block pavers for sidewalk-footpath for Side walks and Parking areas - (RD-L-9)-Z4-L09-RD | 17d | 2027-11-30 | 2027-12-20 | RHD4CZ4L09RD8100, RHD4PRSHLDOSRD1300, RHD4PRSHLDOSRD1400, RHD4ENMSRD2000, RHD4ENMSRD2010, RHD4PRSHLSTAGRD1300, RHD4PRSHLSTAGRD1400 |  | -197.02d |
|  | 2779 | **RHD4-02-002-L09-(RD)-Bituminous concrete wearing course including tack coat (RC2)** |  | 2027-12-20 | 2027-12-22 |  |  |  |
| RHD4CZ4L09RD4100 |  | Supply, lay and compaction Asphaltic wearing course including tack Coat (RC2)for Road Network - (RD-L-9)-Z4-L09-RD | 2d | 2027-12-20 | 2027-12-22 | RHD4CZ4L09RD5100, RHD4CZ4L09RD6100 |  | -197.02d |
|  | 2782 | **RHD4-02-002-L09-(RD)-Pavement Marking** |  | 2027-12-22 | 2027-12-27 |  |  |  |
| RHD4CZ4L09RD7100 |  | Pavement Markings for Road Network - (RD-L-9)-Z4-L09-RD | 4d | 2027-12-22 | 2027-12-27 | RHD4CZ4L09RD4100, RHD4PRSHLDOSRD1500, RHD4PRSHLSTAGRD1500 |  | -197.02d |
|  | 2600 | **RHD4-02-002-Z4-L09-Storm Network - ST** |  | 2026-08-10 | 2027-05-24 |  |  |  |
|  | 8104 | **RHD4-02-002-L09-(ST)-MH Works - 2000 mm diameter** |  | 2026-09-19 | 2027-02-21 |  |  |  |
| RHD4CZ4L09ST3102 |  | Excavation and PC Blinding works for MH 2000 mm - (RD-L-9)-Z4-L09-ST | 2d | 2026-09-19 A | 2027-02-11 | RHD4CZ4L09RW4000, RHD4CZ4C031ST3102 | 56% | -189.02d |
| RHD4CZ4L09ST3202 |  | Installation of Base for MH 2000 mm - (RD-L-9)-Z4-L09-ST | 2d | 2026-10-17 A | 2027-02-14 | RHD4CZ4L09ST3102 | 45% | -184.02d |
| RHD4CZ4L09ST3302 |  | MH Ring and C.Slab works and Backfilling works for MH 2000 mm - (RD-L-9)-Z4-L09-ST | 2d | 2026-10-19 A | 2027-02-16 | RHD4CZ4L09ST3202 | 44% | -184.02d |
| RHD4CZ4L09ST3402 |  | Steel Cover for MH 2000 mm - (RD-L-9)-Z4-L09-ST | 2d | 2027-02-16 | 2027-02-18 | RHD4CZ4L09ST3302 |  | -184.02d |
| RHD4CZ4L09ST3502 |  | Finishing, Benching, Testing works for MH 2000 mm - (RD-L-9)-Z4-L09-ST | 2d | 2027-02-18 | 2027-02-21 | RHD4CZ4L09ST3402 |  | -184.02d |
|  | 8092 | **RHD4-02-002-L09-(ST)-GRP Pipes - 1000 mm diameter** |  | 2026-08-10 | 2027-04-04 |  |  |  |
| RHD4CZ4L09ST1106 |  | Excavation works for GRP Pipe Line 1000 mm - (RD-L-9)-Z4-L09-ST | 2d | 2026-08-10 A | 2027-03-25 | RHD4CZ4L014ST3102, RHD4CZ4L09ST3102 | 50% | -197.02d |
| RHD4CZ4L09ST1206 |  | Bedding works for GRP Pipe Line 1000 mm - (RD-L-9)-Z4-L09-ST | 2d | 2026-09-19 A | 2027-03-28 | RHD4CZ4L09ST1106 | 50% | -177.02d |
| RHD4CZ4L09ST1306 |  | Installing for GRP Pipe Line 1000 mm - (RD-L-9)-Z4-L09-ST | 2d | 2026-09-21 A | 2027-03-30 | RHD4CZ4L09ST1206 | 50% | -177.02d |
| RHD4CZ4L09ST1406 |  | Primary Test for GRP Pipe Line 1000 mm - (RD-L-9)-Z4-L09-ST | 2d | 2027-03-30 | 2027-04-01 | RHD4CZ4L09ST1306 |  | -177.02d |
| RHD4CZ4L09ST1506 |  | Backfilling and warning tape works for GRP Pipe Line 1000 mm - (RD-L-9)-Z4-L09-ST | 2d | 2027-04-01 | 2027-04-04 | RHD4CZ4L09ST3502, RHD4CZ4L09ST1406 |  | -177.02d |
|  | 2413 | **RHD4-02-002-L09-(ST)-GRP Pipes - 500 mm diameter** |  | 2027-03-25 | 2027-04-06 |  |  |  |
| RHD4CZ4L09ST1101 |  | Excavation works for GRP Pipe Line 500 mm - (RD-L-9)-Z4-L09-ST | 2d | 2027-03-25 | 2027-03-28 | RHD4CZ4L09ST1106, RHD4CZ4L09ST3102 |  | -197.02d |
| RHD4CZ4L09ST1201 |  | Bedding works for GRP Pipe Line 500 mm - (RD-L-9)-Z4-L09-ST | 2d | 2027-03-28 | 2027-03-30 | RHD4CZ4L09ST1101 |  | -197.02d |
| RHD4CZ4L09ST1301 |  | Installing for GRP Pipe Line 500 mm - (RD-L-9)-Z4-L09-ST | 2d | 2027-03-30 | 2027-04-01 | RHD4CZ4L09ST1201 |  | -197.02d |
| RHD4CZ4L09ST1401 |  | Primary Test for GRP Pipe Line 500 mm - (RD-L-9)-Z4-L09-ST | 2d | 2027-04-01 | 2027-04-04 | RHD4CZ4L09ST1301 |  | -197.02d |
| RHD4CZ4L09ST1501 |  | Backfilling and warning tape works for GRP Pipe Line 500 mm - (RD-L-9)-Z4-L09-ST | 2d | 2027-04-04 | 2027-04-06 | RHD4CZ4L09ST3502, RHD4CZ4L09ST1401 |  | -197.02d |
|  | 2617 | **RHD4-02-002-L09-(ST)-MH Works - 1200 mm diameter** |  | 2026-10-08 | 2027-04-18 |  |  |  |
| RHD4CZ4L09ST3100 |  | Excavation and PC Blinding works for MH 1200 mm - (RD-L-9)-Z4-L09-ST | 2d | 2026-10-08 A | 2027-04-08 | RHD4ENSDZ4APPST110, RHD4ENMSST2000, RHD4CZ4L09ST1501, RHD4ENMSST2010, RHD4PRSHLSTAGSW1306, RHD4PRSHLSTAPTCr1000, RHD4CZ4L014ST3300, RHD4CZ4L09ST3102 SS | 25% | -197.02d |
| RHD4CZ4L09ST3200 |  | Installation of Base for MH 1200 mm - (RD-L-9)-Z4-L09-ST | 2d | 2027-04-08 | 2027-04-11 | RHD4CZ4L09ST3100, RHD4PRSHLSTAGST1603 |  | -197.02d |
| RHD4CZ4L09ST3300 |  | MH Ring and C.Slab works and Backfilling works for MH 1200 mm - (RD-L-9)-Z4-L09-ST | 2d | 2027-04-11 | 2027-04-13 | RHD4CZ4L09ST3200, RHD4PRSHLDOSST1603 |  | -162.02d |
| RHD4CZ4L09ST3400 |  | Steel Cover for MH 1200 mm - (RD-L-9)-Z4-L09-ST | 2d | 2027-04-13 | 2027-04-15 | RHD4CZ4L09ST3300, RHD4PRSHLDOSST1703, RHD4PRSHLSTAGST1703 |  | -152.02d |
| RHD4CZ4L09ST3500 |  | Finishing, Benching, Testing works for MH 1200 mm - (RD-L-9)-Z4-L09-ST | 2d | 2027-04-15 | 2027-04-18 | RHD4CZ4L09ST3400 |  | -146.02d |
|  | 2618 | **RHD4-02-002-L09-(ST)-MH Works - 1500 mm diameter** |  | 2026-10-01 | 2027-05-24 |  |  |  |
| RHD4CZ4L09ST3101 |  | Excavation and PC Blinding works for MH 1500 mm - (RD-L-9)-Z4-L09-ST | 9d | 2026-10-01 A | 2027-04-11 | RHD4CZ4L09ST3100 SS, RHD4ENSDZ4APPST110, RHD4ENMSST2000 | 42% | -166.02d |
| RHD4CZ4L09ST3201 |  | Installation of Base for MH 1500 mm - (RD-L-9)-Z4-L09-ST | 9d | 2026-10-25 A | 2027-04-21 | RHD4CZ4L09ST3101, RHD4CZ4L09ST3200, RHD4CZ4L09ST3100, RHD4PRSHLSTAGST1603 | 42% | -166.02d |
| RHD4CZ4L09ST3301 |  | MH Ring and C.Slab works and Backfilling works for MH 1500 mm - (RD-L-9)-Z4-L09-ST | 9d | 2027-04-21 | 2027-05-02 | RHD4CZ4L09ST3201, RHD4CZ4L09ST3300 SS, RHD4CZ4L09ST3101, RHD4PRSHLDOSST1603 |  | -166.02d |
| RHD4CZ4L09ST3401 |  | Steel Cover for MH 1500 mm - (RD-L-9)-Z4-L09-ST | 6d | 2027-05-02 | 2027-05-09 | RHD4CZ4L09ST3301, RHD4CZ4L09ST3400 SS, RHD4CZ4L09ST3400, RHD4PRSHLDOSST1703, RHD4PRSHLSTAGST1703 |  | -166.02d |
| RHD4CZ4L09ST3501 |  | Finishing, Benching, Testing works for MH 1500 mm - (RD-L-9)-Z4-L09-ST | 9d | 2027-05-09 | 2027-05-24 | RHD4CZ4L09ST3401, RHD4CZ4L09ST3500 SS |  | -166.02d |
|  | 2606 | **RHD4-02-002-L09-(ST)-GRP Pipes - 900 mm diameter** |  | 2027-04-11 | 2027-04-22 |  |  |  |
| RHD4CZ4L09ST1105 |  | Excavation works for GRP Pipe Line 900 mm - (RD-L-9)-Z4-L09-ST | 2d | 2027-04-11 | 2027-04-13 | RHD4CZ4L09ST3200, RHD4ENSDZ4APPST110 |  | -197.02d |
| RHD4CZ4L09ST1205 |  | Bedding works for GRP Pipe Line 900 mm - (RD-L-9)-Z4-L09-ST | 2d | 2027-04-13 | 2027-04-15 | RHD4CZ4L09ST1105 |  | -197.02d |
| RHD4CZ4L09ST1305 |  | Installing for GRP Pipe Line 900 mm - (RD-L-9)-Z4-L09-ST | 2d | 2027-04-15 | 2027-04-18 | RHD4CZ4L09ST1205, RHD4PRSHLSTAGST1003, RHD4PRSHLDOSST1603, RHD4PRSHLPOST1000, RHD4PRSHLDOSST1003 |  | -197.02d |
| RHD4CZ4L09ST1405 |  | Primary Test for GRP Pipe Line 900 mm - (RD-L-9)-Z4-L09-ST | 2d | 2027-04-18 | 2027-04-20 | RHD4CZ4L09ST1305 |  | -197.02d |
| RHD4CZ4L09ST1505 |  | Backfilling and warning tape works for GRP Pipe Line 900 mm - (RD-L-9)-Z4-L09-ST | 2d | 2027-04-20 | 2027-04-22 | RHD4CZ4L09ST1405 |  | -197.02d |
|  | 2605 | **RHD4-02-002-L09-(ST)-GRP Pipes - 800 mm diameter** |  | 2026-09-30 | 2027-04-25 |  |  |  |
| RHD4CZ4L09ST1104 |  | Excavation works for GRP Pipe Line 800 mm - (RD-L-9)-Z4-L09-ST | 2d | 2026-09-30 A | 2027-04-15 | RHD4CZ4L09ST1105, RHD4ENSDZ4APPST110 | 34% | -197.02d |
| RHD4CZ4L09ST1204 |  | Bedding works for GRP Pipe Line 800 mm - (RD-L-9)-Z4-L09-ST | 2d | 2027-04-15 | 2027-04-18 | RHD4CZ4L09ST1104, RHD4CZ4L09ST1205 |  | -197.02d |

| ID | WBS | Task | Duration | Start | Finish | Predecessors | Complete | Total float |
| --- | --- | --- | --- | --- | --- | --- | --- | --- |
| RHD4CZ4L09ST1304 |  | Installing for GRP Pipe Line 800 mm - (RD-L-9)-Z4-L09-ST | 2d | 2027-04-18 | 2027-04-20 | RHD4CZ4L09ST1204, RHD4CZ4L09ST1305, RHD4PRSHLSTAGST1003, RHD4PRSHLDOSST1603, RHD4PRSHLPOST1000, RHD4PRSHLDOSST1003 |  | -197.02d |
| RHD4CZ4L09ST1404 |  | Primary Test for GRP Pipe Line 800 mm - (RD-L-9)-Z4-L09-ST | 2d | 2027-04-20 | 2027-04-22 | RHD4CZ4L09ST1304, RHD4CZ4L09ST1405 |  | -197.02d |
| RHD4CZ4L09ST1504 |  | Backfilling and warning tape works for GRP Pipe Line 800 mm - (RD-L-9)-Z4-L09-ST | 2d | 2027-04-22 | 2027-04-25 | RHD4CZ4L09ST1404, RHD4CZ4L09ST1505 |  | -197.02d |
|  | 2604 | **RHD4-02-002-L09-(ST)-GRP Pipes - 700 mm diameter** |  | 2027-04-11 | 2027-04-27 |  |  |  |
| RHD4CZ4L09ST1103 |  | Excavation works for GRP Pipe Line 700 mm - (RD-L-9)-Z4-L09-ST | 2d | 2027-04-11 | 2027-04-13 | RHD4ENSDZ4APPST110, RHD4CZ4L09ST3200 |  | -193.02d |
| RHD4CZ4L09ST1203 |  | Bedding works for GRP Pipe Line 700 mm - (RD-L-9)-Z4-L09-ST | 2d | 2027-04-18 | 2027-04-20 | RHD4CZ4L09ST1103, RHD4CZ4L09ST1204 |  | -197.02d |
| RHD4CZ4L09ST1303 |  | Installing for GRP Pipe Line 700 mm - (RD-L-9)-Z4-L09-ST | 2d | 2027-04-20 | 2027-04-22 | RHD4CZ4L09ST1203, RHD4CZ4L09ST1304, RHD4PRSHLSTAGST1003, RHD4PRSHLDOSST1603, RHD4PRSHLPOST1000, RHD4PRSHLDOSST1003 |  | -197.02d |
| RHD4CZ4L09ST1403 |  | Primary Test for GRP Pipe Line 700 mm - (RD-L-9)-Z4-L09-ST | 2d | 2027-04-22 | 2027-04-25 | RHD4CZ4L09ST1303, RHD4CZ4L09ST1404 |  | -197.02d |
| RHD4CZ4L09ST1503 |  | Backfilling and warning tape works for GRP Pipe Line 700 mm - (RD-L-9)-Z4-L09-ST | 2d | 2027-04-25 | 2027-04-27 | RHD4CZ4L09ST1403, RHD4CZ4L09ST1504 |  | -197.02d |
|  | 2603 | **RHD4-02-002-L09-(ST)-GRP Pipes - 600 mm diameter** |  | 2027-04-08 | 2027-04-29 |  |  |  |
| RHD4CZ4L09ST1102 |  | Excavation works for GRP Pipe Line 600 mm - (RD-L-9)-Z4-L09-ST | 2d | 2027-04-08 | 2027-04-11 | RHD4ENSDZ4APPST110, RHD4CZ4L09ST3100, RHD4CZ4L09ST3102 |  | -189.02d |
| RHD4CZ4L09ST1202 |  | Bedding works for GRP Pipe Line 600 mm - (RD-L-9)-Z4-L09-ST | 2d | 2027-04-11 | 2027-04-13 | RHD4CZ4L09ST1102 |  | -189.02d |
| RHD4CZ4L09ST1302 |  | Installing for GRP Pipe Line 600 mm - (RD-L-9)-Z4-L09-ST | 2d | 2027-04-13 | 2027-04-15 | RHD4CZ4L09ST1202, RHD4PRSHLSTAGST1003, RHD4PRSHLDOSST1603, RHD4PRSHLPOST1000, RHD4PRSHLDOSST1003 |  | -189.02d |
| RHD4CZ4L09ST1402 |  | Primary Test for GRP Pipe Line 600 mm - (RD-L-9)-Z4-L09-ST | 2d | 2027-04-25 | 2027-04-27 | RHD4CZ4L09ST1302, RHD4CZ4L09ST1403 |  | -197.02d |
| RHD4CZ4L09ST1502 |  | Backfilling and warning tape works for GRP Pipe Line 600 mm - (RD-L-9)-Z4-L09-ST | 2d | 2027-04-27 | 2027-04-29 | RHD4CZ4L09ST1402, RHD4CZ4L09ST1503, RHD4CZ4L09ST1506 |  | -197.02d |
|  | 2601 | **RHD4-02-002-L09-(ST)-GRP Pipes - 400 mm diameter** |  |  |  |  |  |  |
|  | 2615 | **RHD4-02-002-L09-(ST)-UPVC Pipes - 300 mm diameter** |  | 2026-10-01 | 2027-05-20 |  |  |  |
| RHD4CZ4L09ST2100 |  | Excavation works for UPVC Pipe Line 300 mm - (RD-L-9)-Z4-L09-ST | 4d | 2026-10-01 A | 2027-04-13 | RHD4ENSDZ4APPST110, RHD4CZ4L09ST3100, RHD4CZ4L09ST3102 | 58% | -183.02d |
| RHD4CZ4L09ST2200 |  | Bedding works for UPVC Pipe Line 300 mm - (RD-L-9)-Z4-L09-ST | 3d | 2026-10-17 A | 2027-04-17 | RHD4CZ4L09ST2100 | 8% | -137.02d |
| RHD4CZ4L09ST2300 |  | Installing for UPVC Pipe Line 300 mm - (RD-L-9)-Z4-L09-ST | 4d | 2026-10-19 A | 2027-04-21 | RHD4CZ4L09ST2200, RHD4PRSHLDOSST1103, RHD4PRSHLSTAGST1103 | 6% | -137.02d |
| RHD4CZ4L09ST2400 |  | Primary Test for UPVC Pipe Line 300 mm - (RD-L-9)-Z4-L09-ST | 3d | 2027-04-21 | 2027-04-25 | RHD4CZ4L09ST2300 |  | -137.02d |
| RHD4CZ4L09ST2500 |  | Backfilling and warning tape works for UPVC Pipe Line 300 mm - (RD-L-9)-Z4-L09-ST | 4d | 2027-05-11 | 2027-05-20 | RHD4CZ4L09ST2400, RHD4CZ4L09ST6100, RHD4CZ4L09ST1501, RHD4CZ4L09SW3501 |  | -151.02d |
|  | 2623 | **RHD4-02-002-L09-(ST)-Concrete Encasement** |  | 2027-04-19 | 2027-04-21 |  |  |  |
| RHD4CZ4L09ST6100 |  | Pipe Encasement for Storm Pipelines - (RD-L-9)-Z4-L09-ST | 2d | 2027-04-19 | 2027-04-21 | RHD4CZ4L09ST2300 SS, RHD4CZ4L09ST2300 FF, RHD4CZ4L09ST2200 |  | -134.02d |
|  | 2624 | **RHD4-02-002-Z4-L09-Catch Basin - ST** |  | 2026-10-24 | 2027-05-23 |  |  |  |
|  | 2625 | **RHD4-02-002-L09-(ST)-Single Catch Basin Works** |  | 2026-10-24 | 2027-05-23 |  |  |  |
| RHD4CZ4L09ST7100 |  | Excavation works for Single Catch Basin - (RD-L-9)-Z4-L09-ST | 5d | 2026-10-24 A | 2027-04-19 | RHD4CZ4L09ST3300, RHD4ENSDZ4APPST110 | 27% | -162.02d |
| RHD4CZ4L09ST7200 |  | PC Blinding, Installation and Pipe connection for Single Catch Basin - (RD-L-9)-Z4-L09-ST | 5d | 2026-10-26 A | 2027-04-25 | RHD4CZ4L09ST7100 | 11% | -162.02d |
| RHD4CZ4L09ST7300 |  | Rings & C.Slab & Final Backfill for Single Catch Basin - (RD-L-9)-Z4-L09-ST | 6d | 2027-04-25 | 2027-05-02 | RHD4CZ4L09ST7200, RHD4PRSHLDOSST1303, RHD4PRSHLSTAGST1303 |  | -162.02d |
| RHD4CZ4L09ST7400 |  | Steel Cover for Single Catch Basin - (RD-L-9)-Z4-L09-ST | 5d | 2027-05-02 | 2027-05-08 | RHD4CZ4L09ST7300, RHD4PRSHLDOSST1703 |  | -162.02d |
| RHD4CZ4L09ST7500 |  | Finishing and Insulation works for Single Catch Basin - (RD-L-9)-Z4-L09-ST | 9d | 2027-05-08 | 2027-05-23 | RHD4CZ4L09ST7400 |  | -162.02d |
|  | 2649 | **RHD4-02-002-Z4-L09-Sewage Network - SW** |  | 2026-10-20 | 2027-07-13 |  |  |  |
|  | 957 | **RHD4-02-002-L09-(SW)-MH Works - 1200 mm diameter with Back drop** |  | 2027-04-29 | 2027-05-11 |  |  |  |
| RHD4CZ4L09SW3101 |  | Excavation and PC Blinding works for MH 1200 mm - (RD-L-9)-Z4-L09-SW | 2d | 2027-04-29 | 2027-05-02 | RHD4CZ4L09SW3100 SS, RHD4CZ4L09ST1502 |  | -151.02d |
| RHD4CZ4L09SW3201 |  | Installation of Base for MH 1200 mm - (RD-L-9)-Z4-L09-SW | 2d | 2027-05-02 | 2027-05-04 | RHD4CZ4L09SW3101 |  | -151.02d |
| RHD4CZ4L09SW3301 |  | MH Ring and C.Slab works and Backfilling works for MH 1200 mm - (RD-L-9)-Z4-L09-SW | 2d | 2027-05-04 | 2027-05-06 | RHD4CZ4L09SW3201 |  | -151.02d |
| RHD4CZ4L09SW3401 |  | Steel Cover for MH 1200 mm - (RD-L-9)-Z4-L09-SW | 2d | 2027-05-06 | 2027-05-09 | RHD4CZ4L09SW3301 |  | -151.02d |
| RHD4CZ4L09SW3501 |  | Finishing, Benching, Testing works for MH 1200 mm - (RD-L-9)-Z4-L09-SW | 2d | 2027-05-09 | 2027-05-11 | RHD4CZ4L09SW3401 |  | -151.02d |
|  | 2659 | **RHD4-02-002-L09-(SW)-MH Works - 1200 mm diameter** |  | 2026-10-20 | 2027-07-13 |  |  |  |
| RHD4CZ4L09SW3100 |  | Excavation and PC Blinding works for MH 1200 mm - (RD-L-9)-Z4-L09-SW | 12d | 2026-10-20 A | 2027-05-08 | RHD4ENSDZ4APPSW120, RHD4CZ4L09ST2100, RHD4CZ4L09ST1502 | 29% | -197.02d |
| RHD4CZ4L09SW3200 |  | Installation of Base for MH 1200 mm - (RD-L-9)-Z4-L09-SW | 10d | 2026-10-22 A | 2027-05-24 | RHD4CZ4L09SW3100 | 19% | -197.02d |
| RHD4CZ4L09SW3300 |  | MH Ring and C.Slab works and Backfilling works for MH 1200 mm - (RD-L-9)-Z4-L09-SW | 17d | 2027-05-24 | 2027-06-13 | RHD4CZ4L09SW3200 |  | -197.02d |
| RHD4CZ4L09SW3400 |  | Steel Cover for MH 1200 mm - (RD-L-9)-Z4-L09-SW | 9d | 2027-06-13 | 2027-06-23 | RHD4CZ4L09SW3300 |  | -197.02d |
| RHD4CZ4L09SW3500 |  | Finishing, Benching, Testing works for MH 1200 mm - (RD-L-9)-Z4-L09-SW | 17d | 2027-06-23 | 2027-07-13 | RHD4CZ4L09SW3400 |  | -197.02d |
|  | 2652 | **RHD4-02-002-L09-(SW)-GRP Pipes - 500 mm diameter** |  |  |  |  |  |  |
|  | 2655 | **RHD4-02-002-L09-(SW)-UPVC Pipes - 200 mm diameter** |  | 2026-10-27 | 2027-06-13 |  |  |  |
| RHD4CZ4L09SW2100 |  | Excavation works for UPVC Pipe Line 200 mm - (RD-L-9)-Z4-L09-SW | 7d | 2026-10-27 A | 2027-05-08 | RHD4ENSDZ4APPSW120, RHD4CZ4L09ST2100, RHD4CZ4L09ST1502 | 10% | -172.02d |
| RHD4CZ4L09SW2200 |  | Bedding works for UPVC Pipe Line 200 mm - (RD-L-9)-Z4-L09-SW | 6d | 2026-10-29 A | 2027-05-19 | RHD4CZ4L09SW2100 | 4% | -172.02d |
| RHD4CZ4L09SW2300 |  | Installing for UPVC Pipe Line 200 mm - (RD-L-9)-Z4-L09-SW | 9d | 2026-10-31 A | 2027-05-30 | RHD4CZ4L09SW2200, RHD4PRSHLDOSSW1003, RHD4PRSHLSTAGSW1003 | 4% | -172.02d |
| RHD4CZ4L09SW2400 |  | Primary Test for UPVC Pipe Line 200 mm - (RD-L-9)-Z4-L09-SW | 4d | 2027-05-30 | 2027-06-03 | RHD4CZ4L09SW2300 |  | -172.02d |
| RHD4CZ4L09SW2500 |  | Backfilling and warning tape works for UPVC Pipe Line 200 mm - (RD-L-9)-Z4-L09-SW | 8d | 2027-06-03 | 2027-06-13 | RHD4CZ4L09SW2400 |  | -172.02d |
|  | 2658 | **RHD4-02-002-L09-(SW)-Concrete Encasement** |  |  |  |  |  |  |
|  | 2686 | **RHD4-02-002-Z4-L09-Potable Network - PT** |  | 2027-06-03 | 2027-09-08 |  |  |  |
|  | 2687 | **RHD4-02-002-L09-(PT)-HDPE Pipes - 110 mm diameter** |  | 2027-07-13 | 2027-07-31 |  |  |  |
| RHD4CZ4L09PT1100 |  | Excavation works for HDPE Pipline 110 mm - (RD-L-9)-Z4-L09-PT | 2d | 2027-07-13 | 2027-07-15 | RHD4CZ4L09SW2500 SS, RHD4ENSDZ4APPPT130, RHD4ENMSPT2000, RHD4CZ4L09SW3500 |  | -197.02d |
| RHD4CZ4L09PT1200 |  | Bedding works for HDPE Pipline 110 mm - (RD-L-9)-Z4-L09-PT | 2d | 2027-07-15 | 2027-07-18 | RHD4CZ4L09PT1100 |  | -125.02d |
| RHD4CZ4L09PT1300 |  | Installing for HDPE Pipline 110 mm - (RD-L-9)-Z4-L09-PT | 2d | 2027-07-18 | 2027-07-20 | RHD4CZ4L09PT1200, RHD4PRSHLDOSPT1000, RHD4PRSHLSTAGPT1000 |  | -125.02d |
| RHD4CZ4L09PT1400 |  | Primary Test for HDPE Pipline 110 mm - (RD-L-9)-Z4-L09-PT | 2d | 2027-07-26 | 2027-07-28 | RHD4CZ4L09PT1300, RHD4CZ4L09PT5100 |  | -125.02d |
| RHD4CZ4L09PT1500 |  | Backfilling and warning tape works for HDPE Pipline 110 mm - (RD-L-9)-Z4-L09-PT | 2d | 2027-07-28 | 2027-07-31 | RHD4CZ4L09PT1400 |  | -125.02d |
|  | 1939 | **RHD4-02-002-L09-(PT)-Wash out Valves** |  | 2027-06-19 | 2027-06-23 |  |  |  |
| RHD4CZ4L09PT3102 |  | Installation for Wash out Valves for Potable Water Network - (RD-L-9)-Z4-L09-PT | 2d | 2027-06-19 | 2027-06-21 | RHD4CZ4L09PT1303 |  | -172.02d |
| RHD4CZ4L09PT3202 |  | Stem and Service box for Wash out Valves for Potable Water Network - (RD-L-9)-Z4-L09-PT | 2d | 2027-06-21 | 2027-06-23 | RHD4CZ4L09PT3102 |  | -172.02d |
|  | 2688 | **RHD4-02-002-L09-(PT)-HDPE Pipes - 160 mm diameter** |  | 2027-07-13 | 2027-08-02 |  |  |  |
| RHD4CZ4L09PT1101 |  | Excavation works for HDPE Pipline 160 mm - (RD-L-9)-Z4-L09-PT | 3d | 2027-07-13 | 2027-07-17 | RHD4ENSDZ4APPPT130, RHD4ENMSPT2000, RHD4CZ4L09PT1100 SS |  | -197.02d |
| RHD4CZ4L09PT1201 |  | Bedding works for HDPE Pipline 160 mm - (RD-L-9)-Z4-L09-PT | 3d | 2027-07-17 | 2027-07-20 | RHD4CZ4L09PT1101 |  | -128.02d |
| RHD4CZ4L09PT1301 |  | Installing for HDPE Pipline 160 mm - (RD-L-9)-Z4-L09-PT | 5d | 2027-07-20 | 2027-07-26 | RHD4CZ4L09PT1201, RHD4PRSHLDOSPT1000, RHD4PRSHLSTAGPT1000 |  | -128.02d |
| RHD4CZ4L09PT1401 |  | Primary Test for HDPE Pipline 160 mm - (RD-L-9)-Z4-L09-PT | 2d | 2027-07-26 | 2027-07-28 | RHD4CZ4L09PT1301, RHD4CZ4L09PT5100 |  | -127.02d |
| RHD4CZ4L09PT1501 |  | Backfilling and warning tape works for HDPE Pipline 160 mm - (RD-L-9)-Z4-L09-PT | 4d | 2027-07-28 | 2027-08-02 | RHD4CZ4L09PT1401 |  | -127.02d |
|  | 2690 | **RHD4-02-002-L09-(PT)-HDPE Pipes - 400 mm diameter** |  | 2027-06-03 | 2027-08-03 |  |  |  |
| RHD4CZ4L09PT1103 |  | Excavation works for HDPE Pipline 400 mm - (RD-L-9)-Z4-L09-PT | 4d | 2027-06-03 | 2027-06-08 | RHD4CZ4L09SW2500 SS, RHD4ENSDZ4APPPT130, RHD4ENMSPT2000 |  | -172.02d |

| ID | WBS | Task | Duration | Start | Finish | Predecessors | Total float |
| --- | --- | --- | --- | --- | --- | --- | --- |
| RHD4CZ4L09PT1203 |  | Bedding works for HDPE Pipline 400 mm - (RD-L-9)-Z4-L09-PT | 4d | 2027-06-08 | 2027-06-13 | RHD4CZ4L09PT1103 | -172.02d |
| RHD4CZ4L09PT1303 |  | Installing for HDPE Pipline 400 mm - (RD-L-9)-Z4-L09-PT | 5d | 2027-06-13 | 2027-06-19 | RHD4CZ4L09PT1203, RHD4PRSHLDOSPT1000, RHD4PRSHLSTAGPT1000 | -172.02d |
| RHD4CZ4L09PT1403 |  | Primary Test for HDPE Pipline 400 mm - (RD-L-9)-Z4-L09-PT | 3d | 2027-07-26 | 2027-07-29 | RHD4CZ4L09PT1303, RHD4CZ4L09PT5100, RHD4CZ4L09PT3100 | -128.02d |
| RHD4CZ4L09PT1503 |  | Backfilling and warning tape works for HDPE Pipline 400 mm - (RD-L-9)-Z4-L09-PT | 4d | 2027-07-29 | 2027-08-03 | RHD4CZ4L09PT1403 | -128.02d |
|  | 2692 | **RHD4-02-002-L09-(PT)-Gate Valves (Direct Buried)** |  | 2027-07-22 | 2027-08-07 |  |  |
| RHD4CZ4L09PT3100 |  | Installation for Direct Buried Gate Valves - (RD-L-9)-Z4-L09-PT | 3d | 2027-07-22 | 2027-07-26 | RHD4CZ4L09PT1303 FF, RHD4CZ4L09PT1301 FF, RHD4CZ4L09PT1300 FF, RHD4CZ4L09PT1303 SS, RHD4CZ4L09PT1301 SS, RHD4CZ4L09PT1300 SS, RHD4PRSHLDOSPT1200, RHD4PRSHLSTAGPT1200 | -128.02d |
| RHD4CZ4L09PT3200 |  | Stem and Service box for Direct Buried Gate Valves - (RD-L-9)-Z4-L09-PT | 3d | 2027-08-03 | 2027-08-07 | RHD4CZ4L09PT3100, RHD4CZ4L09PT1503, RHD4CZ4L09PT1501, RHD4CZ4L09PT1500, RHD4PRSHLDOSPT1300, RHD4PRSHLSTAGPT1300 | -124.02d |
|  | 2697 | **RHD4-02-002-L09-(PT)-Air Valve Chambers** |  | 2027-06-08 | 2027-06-17 |  |  |
| RHD4CZ4L09PT2102 |  | Excavation and Bedding for Air Valve Chambers for Potable Water Network - (RD-L-9)-Z4-L09-PT | 2d | 2027-06-08 | 2027-06-10 | RHD4ENSDZ4APPPT130, RHD4CZ4L09PT1103 | -169.02d |
| RHD4CZ4L09PT2202 |  | PC works for Air Valve Chambers for Potable Water Network - (RD-L-9)-Z4-L09-PT | 2d | 2027-06-10 | 2027-06-13 | RHD4CZ4L09PT2102 | -169.02d |
| RHD4CZ4L09PT2302 |  | Installation for Air Valve Chambers for Potable Water Network - (RD-L-9)-Z4-L09-PT | 2d | 2027-06-13 | 2027-06-15 | RHD4CZ4L09PT2202, RHD4PRSHLDOSPT1100, RHD4PRSHLDOSPT1400, RHD4PRSHLSTAGPT1100, RHD4PRSHLSTAGPT1400 | -169.02d |
| RHD4CZ4L09PT2402 |  | Backfilling works for Air Valve Chambers for Potable Water Network - (RD-L-9)-Z4-L09-PT | 2d | 2027-06-15 | 2027-06-17 | RHD4CZ4L09PT2302 | -169.02d |
|  | 2698 | **RHD4-02-002-L09-(PT)-Air Valves** |  | 2027-06-19 | 2027-06-23 |  |  |
| RHD4CZ4L09PT3103 |  | Installation for Air Valves for Potable Water Network - (RD-L-9)-Z4-L09-PT | 2d | 2027-06-19 | 2027-06-21 | RHD4PRSHLDOSPT1200, RHD4PRSHLSTAGPT1200, RHD4CZ4L09PT1303 | -172.02d |
| RHD4CZ4L09PT3203 |  | Stem and Service box for Air Valves for Potable Water Network - (RD-L-9)-Z4-L09-PT | 2d | 2027-06-21 | 2027-06-23 | RHD4CZ4L09PT3103, RHD4CZ4L09PT2402, RHD4PRSHLDOSPT1300, RHD4PRSHLSTAGPT1300 | -172.02d |
|  | 2699 | **RHD4-02-002-L09-(PT)-Fire Hydrant** |  | 2027-08-03 | 2027-09-08 |  |  |
| RHD4CZ4L09PT4100 |  | Excavation and Bedding and Pipe Installation for Fire Hydrant - (RD-L-9)-Z4-L09-PT | 9d | 2027-08-03 | 2027-08-14 | RHD4CZ4L09PT1503, RHD4CZ4L09PT1501, RHD4CZ4L09PT1500, RHD4ENSDZ4APPPT130 | -128.02d |
| RHD4CZ4L09PT4200 |  | Valve Installation for Fire Hydrant - (RD-L-9)-Z4-L09-PT | 6d | 2027-08-14 | 2027-08-21 | RHD4CZ4L09PT4100 | -128.02d |
| RHD4CZ4L09PT4300 |  | Stem for Fire Hydrant - (RD-L-9)-Z4-L09-PT | 6d | 2027-08-21 | 2027-08-28 | RHD4CZ4L09PT4200 | -128.02d |
| RHD4CZ4L09PT4400 |  | Fire Installation for Fire Hydrant - (RD-L-9)-Z4-L09-PT | 6d | 2027-08-28 | 2027-09-04 | RHD4CZ4L09PT4300, RHD4PRSHLDOSPT1500, RHD4PRSHLSTAGPT1500, RHD4CZ4L09PT3200 | -128.02d |
| RHD4CZ4L09PT4500 |  | Protection Barriers for Fire Hydrant - (RD-L-9)-Z4-L09-PT | 4d | 2027-09-04 | 2027-09-08 | RHD4CZ4L09PT4400 | -128.02d |
|  | 2700 | **RHD4-02-002-L09-(PT)-Concrete Encasement** |  | 2027-07-21 | 2027-07-26 |  |  |
| RHD4CZ4L09PT5100 |  | Pipe Encasement for Potable Pipelines - (RD-L-9)-Z4-L09-PT | 4d | 2027-07-21 | 2027-07-26 | RHD4CZ4L09PT1303 FF, RHD4CZ4L09PT1301 FF, RHD4CZ4L09PT1300 FF, RHD4CZ4L09PT1303 SS, RHD4CZ4L09PT1301 SS, RHD4CZ4L09PT1300 SS, RHD4CZ4L09PT1203, RHD4CZ4L09PT1201, RHD4CZ4L09PT1200 | -128.02d |
|  | 1747 | **RHD4-02-002-L09-(PT)-Butterfly Valve Chamber** |  | 2027-07-15 | 2027-07-25 |  |  |
| RHD4CZ4L09PT2100 |  | Excavation and Bedding for Butterfly Valve Chamber for Potable Water Network - (RD-L-9)-Z4-L09-PT | 2d | 2027-07-15 | 2027-07-18 | RHD4CZ4L09PT2101 SS | -155.02d |
| RHD4CZ4L09PT2200 |  | PC works for Butterfly Valve Chamber for Potable Water Network - (RD-L-9)-Z4-L09-PT | 2d | 2027-07-18 | 2027-07-20 | RHD4CZ4L09PT2100 | -155.02d |
| RHD4CZ4L09PT2300 |  | Installation for Butterfly Valve Chamber for Potable Water Network - (RD-L-9)-Z4-L09-PT | 2d | 2027-07-20 | 2027-07-22 | RHD4CZ4L09PT2200 | -155.02d |
| RHD4CZ4L09PT2400 |  | Backfilling works for Butterfly Valve Chamber for Potable Water Network - (RD-L-9)-Z4-L09-PT | 2d | 2027-07-22 | 2027-07-25 | RHD4CZ4L09PT2300 | -155.02d |
|  | 1748 | **RHD4-02-002-L09-(PT)-Butterfly Valves** |  | 2027-07-22 | 2027-07-27 |  |  |
| RHD4CZ4L09PT3101 |  | Installation for Butterfly Valves for Potable Water Network - (RD-L-9)-Z4-L09-PT | 2d | 2027-07-22 | 2027-07-25 | RHD4CZ4L09PT2300 | -155.02d |
| RHD4CZ4L09PT3201 |  | Stem and Service box for Butterfly Valves for Potable Water Network - (RD-L-9)-Z4-L09-PT | 2d | 2027-07-25 | 2027-07-27 | RHD4CZ4L09ST2500, RHD4CZ4L09ST1502, RHD4CZ4L09PT3101, RHD4CZ4L09PT2400 | -155.02d |
|  | 1938 | **RHD4-02-002-L09-(PT)-Wash out Valve Chambers** |  | 2027-07-15 | 2027-07-25 |  |  |
| RHD4CZ4L09PT2101 |  | Excavation and Bedding for Wash out Valve Chambers for Potable Water Network - (RD-L-9)-Z4-L09-PT | 2d | 2027-07-15 | 2027-07-18 | RHD4CZ4L09PT1100 | -192.02d |
| RHD4CZ4L09PT2201 |  | PC works for Wash out Valve Chambers for Potable Water Network - (RD-L-9)-Z4-L09-PT | 2d | 2027-07-18 | 2027-07-20 | RHD4CZ4L09PT2101 | -192.02d |
| RHD4CZ4L09PT2301 |  | Installation for Wash out Valve Chambers for Potable Water Network - (RD-L-9)-Z4-L09-PT | 2d | 2027-07-20 | 2027-07-22 | RHD4CZ4L09PT2201 | -192.02d |
| RHD4CZ4L09PT2401 |  | Backfilling works for Wash out Valve Chambers for Potable Water Network - (RD-L-9)-Z4-L09-PT | 2d | 2027-07-22 | 2027-07-25 | RHD4CZ4L09PT2301 | -192.02d |
|  | 2701 | **RHD4-02-002-Z4-L09-Irrigation Network - IRR** |  | 2027-07-13 | 2027-08-19 |  |  |
|  | 2702 | **RHD4-02-002-L09-(IRR)-HDPE Pipes - 160 mm diameter** |  | 2027-07-13 | 2027-08-19 |  |  |
| RHD4CZ4L09IRR1100 |  | Excavation works for HDPE Pipline 160 mm - (RD-L-9)-Z4-L09-IRR | 7d | 2027-07-13 | 2027-07-21 | RHD4CZ4L09PT1101 SS, RHD4ENSDZ4APPIRR140, RHD4ENMSRR2000, RHD4CZ4L09ST2500 | -197.02d |
| RHD4CZ4L09IRR1200 |  | Bedding works for HDPE Pipline 160 mm - (RD-L-9)-Z4-L09-IRR | 7d | 2027-07-21 | 2027-07-29 | RHD4CZ4L09IRR1100 | -195.02d |
| RHD4CZ4L09IRR1300 |  | Installing for HDPE Pipline 160 mm - (RD-L-9)-Z4-L09-IRR | 7d | 2027-07-29 | 2027-08-07 | RHD4CZ4L09IRR1200, RHD4PRSHLDOSIRR1000, RHD4PRSHLSTAGIRR1000 | -195.02d |
| RHD4CZ4L09IRR1400 |  | Primary Test for HDPE Pipline 160 mm - (RD-L-9)-Z4-L09-IRR | 4d | 2027-08-07 | 2027-08-11 | RHD4CZ4L09IRR1300 | -192.02d |
| RHD4CZ4L09IRR1500 |  | Backfilling and warning tape works for HDPE Pipline 160 mm - (RD-L-9)-Z4-L09-IRR | 7d | 2027-08-11 | 2027-08-19 | RHD4CZ4L09IRR1400 | -192.02d |
|  | 2704 | **RHD4-02-002-L09-(IRR)-HDPE Pipes - 200 mm diameter** |  |  |  |  |  |
|  | 2710 | **RHD4-02-002-L09-(IRR)-Gate Valves (Direct Buried)** |  | 2027-08-02 | 2027-08-11 |  |  |
| RHD4CZ4L09IRR3100 |  | Installation for Direct Buried Gate Valves - (RD-L-9)-Z4-L09-IRR | 4d | 2027-08-02 | 2027-08-07 | RHD4CZ4L09IRR1300 SS, RHD4CZ4L09IRR1300 FF, RHD4PRSHLDOSIRR1100, RHD4PRSHLSTAGIRR1100 | -194.02d |
| RHD4CZ4L09IRR3200 |  | Stem and Service box for Direct Buried Gate Valves - (RD-L-9)-Z4-L09-IRR | 4d | 2027-08-07 | 2027-08-11 | RHD4CZ4L09IRR3100, RHD4PRSHLDOSIRR1300, RHD4PRSHLSTAGIRR1300 | -194.02d |
|  | 2713 | **RHD4-02-002-L09-(IRR)-Wash out Chamber** |  | 2027-08-07 | 2027-08-16 |  |  |
| RHD4CZ4L09IRR2101 |  | Excavation and Bedding for Wash out Chamber for Irrigation Network - (RD-L-9)-Z4-L09-IRR | 2d | 2027-08-07 | 2027-08-09 | RHD4CZ4L09IRR1300, RHD4ENSDZ4APPIRR140 | -195.02d |
| RHD4CZ4L09IRR2201 |  | PC works for Wash out Chamber for Irrigation Network - (RD-L-9)-Z4-L09-IRR | 2d | 2027-08-09 | 2027-08-11 | RHD4CZ4L09IRR2101 | -195.02d |
| RHD4CZ4L09IRR2301 |  | Installation for Wash out Chamber for Irrigation Network - (RD-L-9)-Z4-L09-IRR | 2d | 2027-08-11 | 2027-08-14 | RHD4CZ4L09IRR2201, RHD4PRSHLDOSIRR1200, RHD4PRSHLDOSIRR1400, RHD4PRSHLSTAGIRR1200, RHD4PRSHLSTAGIRR1400 | -195.02d |
| RHD4CZ4L09IRR2401 |  | Backfilling works for Wash out Chamber for Irrigation Network - (RD-L-9)-Z4-L09-IRR | 2d | 2027-08-14 | 2027-08-16 | RHD4CZ4L09IRR2301 | -195.02d |
|  | 2714 | **RHD4-02-002-L09-(IRR)-Wash out Valves** |  | 2027-08-14 | 2027-08-18 |  |  |
| RHD4CZ4L09IRR3102 |  | Installation for Wash out Valve for Irrigation Network - (RD-L-9)-Z4-L09-IRR | 2d | 2027-08-14 | 2027-08-16 | RHD4CZ4L09IRR2301, RHD4PRSHLDOSIRR1100, RHD4PRSHLSTAGIRR1100 | -195.02d |
| RHD4CZ4L09IRR3202 |  | Stem and Service box for Wash out Valve for Irrigation Network - (RD-L-9)-Z4-L09-IRR | 2d | 2027-08-16 | 2027-08-18 | RHD4CZ4L09IRR3102, RHD4CZ4L09IRR2401, RHD4PRSHLDOSIRR1300, RHD4PRSHLSTAGIRR1300 | -195.02d |
|  | 2735 | **RHD4-02-002-Z4-L09-Medium Voltage Network - MV** |  | 2027-06-09 | 2027-08-14 |  |  |
|  | 2736 | **RHD4-02-002-L09-(MV)-Medium Voltage cable trench** |  | 2027-06-09 | 2027-07-14 |  |  |
| RHD4CZ4L09MV1100 |  | Excavation for Medium Voltage Trench - (RD-L-9)-Z4-L09-MV | 6d | 2027-06-09 | 2027-06-16 | RHD4ENSDZ4APPMV150, RHD4CZ4L09RD3100, RHD4CZ4L014MV1100 | -157.02d |
| RHD4CZ4L09MV1200 |  | Trench Backfilling for Medium Voltage Network - (RD-L-9)-Z4-L09-MV | 6d | 2027-07-07 | 2027-07-14 | RHD4CZ4L09MV3200, RHD4CZ4L09MV3101 | -157.02d |
|  | 2738 | **RHD4-02-002-L09-(MV)-Medium Voltage cables 3Cx 500 mm²** |  | 2027-06-16 | 2027-08-01 |  |  |
| RHD4CZ4L09MV3100 |  | Installation of Medium Voltage Cables 3Cx 500 mm² - (RD-L-9)-Z4-L09-MV | 13d | 2027-06-16 | 2027-07-01 | RHD4CZ4L09MV1100, RHD4PRSHLDOSMV1100, RHD4ENMSMV2000, RHD4CZ4L09ST2100, RHD4ENMSMV2010, RHD4PRSHLSTAGMV1100 | -157.02d |
| RHD4CZ4L09MV3200 |  | Joints Installation of Medium Voltage Cables 3Cx 500 mm² - (RD-L-9)-Z4-L09-MV | 5d | 2027-07-01 | 2027-07-07 | RHD4CZ4L09MV3100, RHD4PRSHLDOSMV1300, RHD4PRSHLSTAGMV1300 | -157.02d |
| RHD4CZ4L09MV3300 |  | Testing of Medium Voltage Cables 3Cx 500 mm² - (RD-L-9)-Z4-L09-MV | 13d | 2027-07-14 | 2027-07-29 | RHD4CZ4L09MV3200, RHD4CZ4L09MV1200, RHD4CZ4L09MV4200 | -129.02d |
| RHD4CZ4L09MV3400 |  | Termination of Medium Voltage Cables 3Cx 500 mm² - (RD-L-9)-Z4-L09-MV | 2d | 2027-07-29 | 2027-08-01 | RHD4CZ4L09MV3300 | -129.02d |
|  | 2739 | **RHD4-02-002-L09-(MV)-Medium Voltage cables 3Cx 50 mm²** |  | 2027-06-16 | 2027-07-19 |  |  |
| RHD4CZ4L09MV3101 |  | Installation of Medium Voltage Cables 3Cx 50 mm² - (RD-L-9)-Z4-L09-MV | 2d | 2027-06-16 | 2027-06-19 | RHD4CZ4L09MV1100, RHD4PRSHLDOSMV1200, RHD4ENMSMV2000, RHD4ENMSMV2010, RHD4PRSHLSTAGMV1200 | -141.02d |
| RHD4CZ4L09MV3301 |  | Testing of Medium Voltage Cables 3Cx 50 mm² - (RD-L-9)-Z4-L09-MV | 2d | 2027-07-14 | 2027-07-17 | RHD4CZ4L09MV3101, RHD4CZ4L09MV1200 | -141.02d |
| RHD4CZ4L09MV3401 |  | Termination of Medium Voltage Cables 3Cx 50 mm² - (RD-L-9)-Z4-L09-MV | 2d | 2027-07-17 | 2027-07-19 | RHD4CZ4L09MV3301 | -118.02d |
|  | 2740 | **RHD4-02-002-L09-(MV)-Normally open Point (Outdoor Type)** |  | 2027-06-29 | 2027-07-04 |  |  |
| RHD4CZ4L09MV4100 |  | Installation for Normally open Point - (RD-L-9)-Z4-L09-MV | 2d | 2027-06-29 | 2027-07-01 | RHD4CZ4L09MV3101 SS, RHD4CZ4L09MV3100 FF, RHD4PRSHLDOSMV1400, RHD4PRSHLSTAGMV1400 | -145.02d |

| ID | WBS | Task | Duration | Start | Finish | Predecessors | Total float |
| --- | --- | --- | --- | --- | --- | --- | --- |
| RHD4CZ4L09MV4200 |  | Termination for Normally open Point - (RD-L-9)-Z4-L09-MV | 2d | 2027-07-01 | 2027-07-04 | RHD4CZ4L09MV4100 | -145.02d |
|  | 2741 | **RHD4-02-002-L09-(MV)-Unit Substations** |  | 2027-07-14 | 2027-08-14 |  |  |
| RHD4CZ4L09MV5100 |  | Excavation for Unit Substations for Medium Voltage Network - (RD-L-9)-Z4-L09-MV | 4d | 2027-07-14 | 2027-07-19 | RHD4CZ4L09MV1200, RHD4ENSDZ4APPMV150 | -157.02d |
| RHD4CZ4L09MV5200 |  | Concrete Base Placement for Unit Substations for Medium Voltage Network - (RD-L-9)-Z4-L09-MV | 4d | 2027-07-19 | 2027-07-24 | RHD4CZ4L09MV5100 | -157.02d |
| RHD4CZ4L09MV5300 |  | Installation for Fences and doors for Medium Voltage Network - (RD-L-9)-Z4-L09-MV | 10d | 2027-07-24 | 2027-08-04 | RHD4CZ4L09MV5200 | -157.02d |
| RHD4CZ4L09MV5400 |  | Installation for Unit Substations for Medium Voltage Network - (RD-L-9)-Z4-L09-MV | 8d | 2027-08-04 | 2027-08-14 | RHD4CZ4L09MV5300, RHD4CZ4L09MV3301 | -157.02d |
|  | 2742 | **RHD4-02-002-Z4-L09-Low Voltage Network - LV** |  | 2027-07-21 | 2027-10-16 |  |  |
|  | 2743 | **RHD4-02-002-L09-(LV)-Low Voltage duct banks** |  | 2027-07-21 | 2027-07-31 |  |  |
| RHD4CZ4L09LV2100 |  | Excavation of Duct Banks for Low Voltage Network - (RD-L-9)-Z4-L09-LV | 2d | 2027-07-21 | 2027-07-24 | RHD4CZ4L09RW4000, RHD4ENSDZ4APPLV160, RHD4CZ4L09IRR1100 | -197.02d |
| RHD4CZ4L09LV2200 |  | Installation of Duct Banks for Low Voltage Network - (RD-L-9)-Z4-L09-LV | 2d | 2027-07-24 | 2027-07-26 | RHD4CZ4L09LV2100, RHD4PRSHLDOSLV1000, RHD4PRSHLSTAGLV1000 | -196.02d |
| RHD4CZ4L09LV2300 |  | Pouring of Duct Banks for Low Voltage Network - (RD-L-9)-Z4-L09-LV | 2d | 2027-07-26 | 2027-07-28 | RHD4CZ4L09LV2200 | -196.02d |
| RHD4CZ4L09LV2400 |  | Backfilling of Duct Banks for Low Voltage Network - (RD-L-9)-Z4-L09-LV | 2d | 2027-07-28 | 2027-07-31 | RHD4CZ4L09LV2300 | -195.02d |
|  | 2745 | **RHD4-02-002-L09-(LV)-Low Voltage cables** |  | 2027-09-29 | 2027-10-09 |  |  |
| RHD4CZ4L09LV3100 |  | Excavation for Low Voltage Cables for Low Voltage Network - (RD-L-9)-Z4-L09-LV | 2d | 2027-09-29 | 2027-10-02 | RHD4CZ4L09LV2400, RHD4CZ4L09MV1200, RHD4ENSDZ4APPLV160, RHD4CZ4L09SL3300, RHD4CZ4L09MV3401, RHD4CZ4L09MV3400 | -179.02d |
| RHD4CZ4L09LV3200 |  | Cable Laying of Low Voltage Cables for Low Voltage Network - (RD-L-9)-Z4-L09-LV | 2d | 2027-10-02 | 2027-10-04 | RHD4CZ4L09LV3100, RHD4PRSHLDOSLV1100, RHD4ENMSLV2000, RHD4ENMSLV2010, RHD4PRSHLSTAGLV1100 | -179.02d |
| RHD4CZ4L09LV3300 |  | Warning tape and Backfill for Low Voltage Cables for Low Voltage Network - (RD-L-9)-Z4-L09-LV | 2d | 2027-10-04 | 2027-10-06 | RHD4CZ4L09LV3200 | -179.02d |
| RHD4CZ4L09LV3400 |  | Testing of Low Voltage Cables for Low Voltage Network - (RD-L-9)-Z4-L09-LV | 2d | 2027-10-06 | 2027-10-09 | RHD4CZ4L09LV3300 | -179.02d |
|  | 2746 | **RHD4-02-002-L09-(LV)-Low Voltage Distribution Pillars** |  | 2027-10-09 | 2027-10-16 |  |  |
| RHD4CZ4L09LV4100 |  | Leveling for Distribution Pillars for Low Voltage Network - (RD-L-9)-Z4-L09-LV | 2d | 2027-10-09 | 2027-10-11 | RHD4CZ4L09LV3300, RHD4CZ4L09LV3400 | -179.02d |
| RHD4CZ4L09LV4200 |  | Lean Concrete for Distribution Pillars for Low Voltage Network - (RD-L-9)-Z4-L09-LV | 2d | 2027-10-11 | 2027-10-13 | RHD4CZ4L09LV4100 | -179.02d |
| RHD4CZ4L09LV4300 |  | Installation of Distribution Pillars for Low Voltage Network - (RD-L-9)-Z4-L09-LV | 2d | 2027-10-13 | 2027-10-16 | RHD4CZ4L09LV4200, RHD4PRSHLDOSLV1200, RHD4PRSHLDOSLV1300, RHD4PRSHLSTAGLV1200, RHD4PRSHLSTAGLV1300 | -179.02d |
|  | 2747 | **RHD4-02-002-L09-(LV)-Low Voltage Distribution Pillars Earthing** |  |  |  |  |  |
|  | 2748 | **RHD4-02-002-Z4-L09-Street Lighting Network - SL** |  | 2027-07-14 | 2027-11-02 |  |  |
|  | 2749 | **RHD4-02-002-L09-(SL)-Street Lighting duct banks** |  | 2027-07-21 | 2027-08-04 |  |  |
| RHD4CZ4L09SL2100 |  | Excavation of Duct Banks for Street Lighting Network - (RD-L-9)-Z4-L09-SL | 3d | 2027-07-21 | 2027-07-25 | RHD4CZ4L09LV2100 SS, RHD4ENSDZ4APPSL170 | -197.02d |
| RHD4CZ4L09SL2200 |  | Installation of Duct Banks for Street Lighting Network - (RD-L-9)-Z4-L09-SL | 4d | 2027-07-25 | 2027-07-29 | RHD4CZ4L09SL2100, RHD4PRSHLDOSSL1000, RHD4PRSHLSTAGSL1000 | -197.02d |
| RHD4CZ4L09SL2300 |  | Pouring of Duct Banks for Street Lighting Network - (RD-L-9)-Z4-L09-SL | 3d | 2027-07-29 | 2027-08-02 | RHD4CZ4L09SL2200, RHD4CZ4L09LV2300 | -197.02d |
| RHD4CZ4L09SL2400 |  | Backfilling of Duct Banks for Street Lighting Network - (RD-L-9)-Z4-L09-SL | 2d | 2027-08-02 | 2027-08-04 | RHD4CZ4L09SL2300, RHD4CZ4L09LV2400 | -197.02d |
|  | 2750 | **RHD4-02-002-L09-(SL)-Street Lighting Drawpit** |  | 2027-07-14 | 2027-07-29 |  |  |
| RHD4CZ4L09SL5100 |  | Excavation of Drawpit size 600x600x900mm for Street Lighting Network - (RD-L-9)-Z4-L09-SL | 2d | 2027-07-14 | 2027-07-17 | RHD4ENSDZ4APPSL170, RHD4CZ4L09MV1200 | -146.02d |
| RHD4CZ4L09SL5200 |  | Installation of Drawpit size 600x600x900mm for Street Lighting Network - (RD-L-9)-Z4-L09-SL | 2d | 2027-07-27 | 2027-07-29 | RHD4CZ4L09SL5100, RHD4PRSHLDOSSL1400, RHD4PRSHLSTAGSL1400, RHD4CZ4L09PT3201 | -155.02d |
|  | 2751 | **RHD4-02-002-L09-(SL)-Street Lighting cables** |  | 2027-08-25 | 2027-10-16 |  |  |
| RHD4CZ4L09SL3100 |  | Excavation for Street Lighting Cables for Street Lighting Network - (RD-L-9)-Z4-L09-SL | 11d | 2027-08-25 | 2027-09-07 | RHD4CZ4L09SL1300, RHD4ENSDZ4APPSL170 | -179.02d |
| RHD4CZ4L09SL3200 |  | Cable Laying of Street Lighting Cables for Street Lighting Network - (RD-L-9)-Z4-L09-SL | 9d | 2027-09-07 | 2027-09-18 | RHD4CZ4L09SL3100, RHD4PRSHLDOSSL1100, RHD4ENMSSL2000, RHD4ENMSSL2010, RHD4PRSHLSTAGSL1100 | -179.02d |
| RHD4CZ4L09SL3300 |  | Warning tape and Backfill for Street Lighting Cables for Street Lighting Network - (RD-L-9)-Z4-L09-SL | 9d | 2027-09-18 | 2027-09-29 | RHD4CZ4L09SL3200 | -179.02d |
| RHD4CZ4L09SL3400 |  | Testing of Street Lighting Cables for Street Lighting Network - (RD-L-9)-Z4-L09-SL | 6d | 2027-10-09 | 2027-10-16 | RHD4CZ4L09SL3300, RHD4CZ4L09LV3400 | -165.02d |
|  | 2752 | **RHD4-02-002-L09-(SL)-Street Lighting Poles** |  | 2027-08-04 | 2027-11-02 |  |  |
| RHD4CZ4L09SL1100 |  | Excavation for RC Base for Lighting Poles for Street Lighting Network - (RD-L-9)-Z4-L09-SL | 6d | 2027-08-04 | 2027-08-11 | RHD4CZ4L09SL2400, RHD4ENSDZ4APPSL170, RHD4CZ4C031SL1100 | -197.02d |
| RHD4CZ4L09SL1200 |  | Installation for RC Base for Lighting Poles for Street Lighting Network - (RD-L-9)-Z4-L09-SL | 6d | 2027-08-11 | 2027-08-18 | RHD4CZ4L09SL1100 | -179.02d |
| RHD4CZ4L09SL1300 |  | Backfill for RC Base for Lighting Poles for Street Lighting Network - (RD-L-9)-Z4-L09-SL | 6d | 2027-08-18 | 2027-08-25 | RHD4CZ4L09SL1200 | -179.02d |
| RHD4CZ4L09SL1400 |  | Installation for Lighting Poles for Street Lighting Network - (RD-L-9)-Z4-L09-SL | 9d | 2027-10-16 | 2027-10-26 | RHD4CZ4L09SL1300, RHD4CZ4L09SL3400, RHD4PRSHLDOSSL1200, RHD4ENMSSL2000, RHD4ENMSSL2010, RHD4PRSHLSTAGSL1200 | -165.02d |
| RHD4CZ4L09SL1500 |  | Luminaire Installation for Lighting Poles for Street Lighting Network - (RD-L-9)-Z4-L09-SL | 6d | 2027-10-26 | 2027-11-02 | RHD4CZ4L09SL1400, RHD4PRSHLDOSSL1300, RHD4PRSHLSTAGSL1300 | -165.02d |
|  | 2753 | **RHD4-02-002-L09-(SL)-Street Lighting Feeder Pillars** |  | 2027-10-16 | 2027-10-28 |  |  |
| RHD4CZ4L09SL4100 |  | Leveling for Distribution Pillars for Street Lighting Network - (RD-L-9)-Z4-L09-SL | 2d | 2027-10-16 | 2027-10-18 | RHD4CZ4L09SL3300, RHD4CZ4L09SL3400 | -158.02d |
| RHD4CZ4L09SL4200 |  | Lean Concrete for Distribution Pillars for Street Lighting Network - (RD-L-9)-Z4-L09-SL | 2d | 2027-10-18 | 2027-10-20 | RHD4CZ4L09SL4100 | -158.02d |
| RHD4CZ4L09SL4300 |  | Installation of Distribution Pillars for Street Lighting Network - (RD-L-9)-Z4-L09-SL | 2d | 2027-10-26 | 2027-10-28 | RHD4CZ4L09SL4200, RHD4CZ4L09SL1400 | -163.02d |
|  | 2754 | **RHD4-02-002-L09-(SL)-Street Lighting Earthing System** |  | 2027-10-28 | 2027-10-31 |  |  |
| RHD4CZ4L09SL6100 |  | Installation of Earthing for Lighting Poles and Fedder Pillers for Street Lighting Network - (RD-L-9)-Z4-L09-SL | 2d | 2027-10-28 | 2027-10-31 | RHD4CZ4L09SL4300, RHD4ENMSER2000, RHD4ENMSER2010 | -163.02d |
|  | 2760 | **RHD4-02-002-Z4-L09-Telecommunications Network - TC** |  | 2027-02-11 | 2027-10-12 |  |  |
|  | 2761 | **RHD4-02-002-L09-(TC)-Telecommunications Ducts** |  | 2027-08-11 | 2027-10-12 |  |  |
| RHD4CZ4L09TC2100 |  | Excavation of HDPE Ducts for Telecom Network - (RD-L-9)-Z4-L09-TC | 19d | 2027-08-11 | 2027-09-02 | RHD4ENSDZ4APPTC190, RHD4CZ4L09SL2100, RHD4CZ4L09SL1100 | -197.02d |
| RHD4CZ4L09TC2200 |  | Installation of HDPE Ducts for Telecom Network - (RD-L-9)-Z4-L09-TC | 11d | 2027-09-02 | 2027-09-15 | RHD4CZ4L09TC2100, RHD4PRSHLDOSTC1000, RHD4PRSHLSTAGTC1000 | -192.02d |
| RHD4CZ4L09TC2400 |  | Backfilling of HDPE Ducts for Telecom Network - (RD-L-9)-Z4-L09-TC | 19d | 2027-09-19 | 2027-10-12 | RHD4CZ4L09TC2200, RHD4CZ4L09TC5200 | -195.02d |
|  | 2762 | **RHD4-02-002-L09-(TC)-Telecommunications Manholes** |  | 2027-09-02 | 2027-09-19 |  |  |
| RHD4CZ4L09TC5100 |  | Excavation for Manholes for Telecom Network - (RD-L-9)-Z4-L09-TC | 7d | 2027-09-02 | 2027-09-11 | RHD4CZ4L09TC2100, RHD4ENSDZ4APPTC190 | -195.02d |
| RHD4CZ4L09TC5200 |  | Installation of Manholes for Telecom Network - (RD-L-9)-Z4-L09-TC | 7d | 2027-09-11 | 2027-09-19 | RHD4CZ4L09TC5100, RHD4CZ4L09TC2200 SS, RHD4PRSHLDOSTC1200, RHD4PRSHLSTAGTC1200 | -195.02d |
|  | 2763 | **RHD4-02-002-L09-(TC)-Telecomminications Road Crossings** |  | 2027-02-11 | 2027-02-21 |  |  |
| RHD4CZ4L09TC3100 |  | Excavation for Road Crossings for Telecom Network - (RD-L-9)-Z4-L09-TC | 2d | 2027-02-11 | 2027-02-14 | RHD4ENSDZ4APPTC190, RHD4CZ4L09ST3102 | -156.02d |
| RHD4CZ4L09TC3200 |  | Installation of Road Crossings for Telecom Network - (RD-L-9)-Z4-L09-TC | 2d | 2027-02-14 | 2027-02-16 | RHD4CZ4L09TC3100, RHD4PRSHLDOSTC1100, RHD4PRSHLSTAGTC1100 | -156.02d |
| RHD4CZ4L09TC3300 |  | Pouring of Road Crossings for Telecom Network - (RD-L-9)-Z4-L09-TC | 2d | 2027-02-16 | 2027-02-18 | RHD4CZ4L09TC3200 | -156.02d |
| RHD4CZ4L09TC3400 |  | Backfilling of Road Crossings for Telecom Network - (RD-L-9)-Z4-L09-TC | 2d | 2027-02-18 | 2027-02-21 | RHD4CZ4L09TC3300 | -156.02d |
|  | 2764 | **RHD4-02-002-Z4-L09-Information and Communication Technologies - ICT** |  | 2027-02-11 | 2027-11-06 |  |  |
|  | 2765 | **RHD4-02-002-L09-(ICT)-Information and Communication Technologies Ducts** |  | 2027-09-02 | 2027-11-06 |  |  |
| RHD4CZ4L09ICT2100 |  | Excavation of HDPE Ducts for ICT Network - (RD-L-9)-Z4-L09-ICT | 19d | 2027-09-02 | 2027-09-26 | RHD4ENSDZ4APPICT200, RHD4CZ4L09TC3100, RHD4CZ4L09TC2100, RHD4CZ4L09MV4200 | -197.02d |
| RHD4CZ4L09ICT2200 |  | Installation of HDPE Ducts for ICT Network - (RD-L-9)-Z4-L09-ICT | 12d | 2027-09-26 | 2027-10-10 | RHD4CZ4L09ICT2100, RHD4PRSHLDOSICT1000, RHD4PRSHLSTAGICT1000, RHD4CZ4L09MV5400 | -193.02d |
| RHD4CZ4L09ICT2400 |  | Backfilling of HDPE Ducts for ICT Network - (RD-L-9)-Z4-L09-ICT | 19d | 2027-10-14 | 2027-11-06 | RHD4CZ4L09ICT2200, RHD4CZ4L09ICT5200, RHD4CZ4L09TC2400, RHD4CZ4L09LV4300 FF | -197.02d |
|  | 2766 | **RHD4-02-002-L09-(ICT)-Information and Communication Technologies Manholes** |  | 2027-09-26 | 2027-10-14 |  |  |
| RHD4CZ4L09ICT5100 |  | Excavation for Manholes for ICT Network - (RD-L-9)-Z4-L09-ICT | 8d | 2027-09-26 | 2027-10-05 | RHD4CZ4L09ICT2100, RHD4ENSDZ4APPICT200 | -197.02d |
| RHD4CZ4L09ICT5200 |  | Installation of Manholes for ICT Network - (RD-L-9)-Z4-L09-ICT | 8d | 2027-10-05 | 2027-10-14 | RHD4CZ4L09ICT5100, RHD4CZ4L09ICT2200 SS, RHD4PRSHLDOSICT1200, RHD4PRSHLSTAGICT1200 | -197.02d |
|  | 2767 | **RHD4-02-002-L09-(ICT)-Information and Communication Technologies Road Crossings** |  | 2027-02-11 | 2027-02-21 |  |  |

| ID | WBS | Task | Duration | Start | Finish | Predecessors | Total float |
| --- | --- | --- | --- | --- | --- | --- | --- |
| RHD4CZ4L09ICT3100 |  | Excavation for Road Crossings for ICT Network - (RD-L-9)-Z4-L09-ICT | 2d | 2027-02-11 | 2027-02-14 | RHD4ENSDZ4APPICT200, RHD4CZ4L09ST3102 | -156.02d |
| RHD4CZ4L09ICT3200 |  | Installation of Road Crossings for ICT Network - (RD-L-9)-Z4-L09-ICT | 2d | 2027-02-14 | 2027-02-16 | RHD4CZ4L09ICT3100, RHD4PRSHLDOSICT1100, RHD4PRSHLSTAGICT1100 | -156.02d |
| RHD4CZ4L09ICT3300 |  | Pouring of Road Crossings for ICT Network - (RD-L-9)-Z4-L09-ICT | 2d | 2027-02-16 | 2027-02-18 | RHD4CZ4L09ICT3200 | -156.02d |
| RHD4CZ4L09ICT3400 |  | Backfilling of Road Crossings for ICT Network - (RD-L-9)-Z4-L09-ICT | 2d | 2027-02-18 | 2027-02-21 | RHD4CZ4L09ICT3300 | -156.02d |
|  | 2755 | **RHD4-02-002-Z4-L09-Landscape Network - LS** |  |  |  |  |  |
|  | 2756 | **RHD4-02-002-L09-(LS)-Landscape Lighting cables** |  |  |  |  |  |
|  | 2757 | **RHD4-02-002-L09-(LS)-Landscape Feeder Pillars** |  |  |  |  |  |
|  | 2758 | **RHD4-02-002-L09-(LS)-Landscape Bollard Poles** |  |  |  |  |  |
|  | 2759 | **RHD4-02-002-L09-(LS)-Landscape Feeder Pillars Earthing** |  |  |  |  |  |
|  | 2768 | **RHD4-02-002-Z4-L09-Security Network - CCTV** |  |  |  |  |  |
|  | 2769 | **RHD4-02-002-L09-(CCTV)-Civil Works** |  |  |  |  |  |
|  | 2770 | **RHD4-02-002-L09-(CCTV)-CCTV Poles** |  |  |  |  |  |
|  | 2771 | **RHD4-02-002-L09-(CCTV)-Camera** |  |  |  |  |  |
|  | 2772 | **RHD4-02-002-L09-(CCTV)-Power and Infrastructure** |  |  |  |  |  |
|  | 2774 | **RHD4-02-002-L09-(CCTV)-CCTV Panels and Components** |  |  |  |  |  |
|  | 2218 | **RHD4-02-002-Z4-C012** |  | 2027-02-11 | 2027-11-22 |  |  |
|  | 2340 | **RHD4-02-002-Z4-C012-Crossings Irrigation Network - IRRC** |  |  |  |  |  |
|  | 2341 | **RHD4-02-002-C012-(IRRC)-HDPE Pipes - 160 mm diameter** |  |  |  |  |  |
|  | 2345 | **RHD4-02-002-C012-(IRRC)-HDPE Pipes - 315 mm diameter** |  |  |  |  |  |
|  | 2349 | **RHD4-02-002-C012-(IRRC)-Gate Valves (Direct Buried)** |  |  |  |  |  |
|  | 2350 | **RHD4-02-002-C012-(IRRC)-Butterfly Valve Chamber** |  |  |  |  |  |
|  | 2351 | **RHD4-02-002-C012-(IRRC)-Butterfly Valves** |  |  |  |  |  |
|  | 2397 | **RHD4-02-002-Z4-C012-Road Works - RD** |  | 2027-02-18 | 2027-11-22 |  |  |
|  | 2398 | **RHD4-02-002-C012-(RD)-Subgrade** |  | 2027-02-18 | 2027-03-14 |  |  |
| RHD4CZ4C012RD1100 |  | Supply, lay and compaction subgrade compacted thickness 300 mm for Roads - (RD-C-1 /2)-Z4-C012-RD | 16d | 2027-02-18 | 2027-03-14 | RHD4CZ4C012ICT3400 SS, RHD4ENSDZ4APPEW100, RHD4ENSDZ4APPRD220 | -189.02d |
|  | 2399 | **RHD4-02-002-C012-(RD)-Aggregate Base Course** |  | 2027-03-14 | 2027-03-28 |  |  |
| RHD4CZ4C012RD2100 |  | Supply, lay and compaction Aggregate base course compacted thickness 300 mmfor Roads - (RD-C-1 /2)-Z4-C012-RD | 12d | 2027-03-14 | 2027-03-28 | RHD4CZ4C012RD1100, RHD4PRSHLDOSRD1000, RHD4PRSHLSTAGRD1000 | -189.02d |
|  | 2400 | **RHD4-02-002-C012-(RD)-Bituminous base course Two Layers, including (MC1)&(RC2)** |  | 2027-03-28 | 2027-11-07 |  |  |
| RHD4CZ4C012RD3100 |  | Supply, lay and Asphaltic base course including Prime Coat (MC1) for 1st Layer - (RD-C-1 /2)-Z4-C012-RD | 5d | 2027-03-28 | 2027-04-03 | RHD4CZ4C012RD2100, RHD4PRSHLDOSRD1100, RHD4ENMSASPH2000, RHD4ENMSASPH2010, RHD4PRSHLSTAGRD1100 | -189.02d |
| RHD4CZ4C012RD3200 |  | Supply, lay and Asphaltic base course including Tack Coat (RC2) for 2nd Layer - (RD-C-1 /2)-Z4-C012-RD | 5d | 2027-11-01 | 2027-11-07 | RHD4CZ4C012RD3100, RHD4PRSHLDOSRD1100, RHD4PRSHLSTAGRD1100, RHD4CZ4C012ICT2400 | -188.02d |
|  | 2402 | **RHD4-02-002-C012-(RD)-Precast Concrete Curb** |  | 2027-11-07 | 2027-11-13 |  |  |
| RHD4CZ4C012RD5100 |  | Supply and installation Precast Concrete Kerb for Roads - (RD-C-1 /2)-Z4-C012-RD | 5d | 2027-11-07 | 2027-11-13 | RHD4CZ4C012RD3200, RHD4PRSHLDOSRD1200, RHD4ENMSRD2000, RHD4ENMSRD2010, RHD4PRSHLSTAGRD1200 | -188.02d |
|  | 2405 | **RHD4-02-002-C012-(RD)-Traffic Signage** |  | 2027-11-13 | 2027-11-20 |  |  |
| RHD4CZ4C012RD8100 |  | Installation of Traffic Signage for Road Network - (RD-C-1 /2)-Z4-C012-RD | 6d | 2027-11-13 | 2027-11-20 | RHD4CZ4C012RD5100, RHD4CZ4C012TC2400, RHD4CZ4C012ICT2400, RHD4PRSHLDOSRD1600, RHD4PRSHLSTAGRD1600, RHD4CZ4C012LV4300, RHD4CZ4C031RD8100, RHD4CZ4RA02RD9100 | -188.02d |
|  | 2403 | **RHD4-02-002-C012-(RD)-Precast Interlocking Block Pavers** |  |  |  |  |  |
|  | 2401 | **RHD4-02-002-C012-(RD)-Bituminous concrete wearing course including tack coat (RC2)** |  | 2027-11-13 | 2027-11-16 |  |  |
| RHD4CZ4C012RD4100 |  | Supply, lay and compaction Asphaltic wearing course including tack Coat (RC2)for Road Network - (RD-C-1 /2)-Z4-C012-RD | 3d | 2027-11-13 | 2027-11-16 | RHD4CZ4C012RD5100 | -126.02d |
|  | 2404 | **RHD4-02-002-C012-(RD)-Pavement Marking** |  | 2027-11-16 | 2027-11-22 |  |  |
| RHD4CZ4C012RD7100 |  | Pavement Markings for Road Network - (RD-C-1 /2)-Z4-C012-RD | 5d | 2027-11-16 | 2027-11-22 | RHD4CZ4C012RD4100, RHD4PRSHLDOSRD1500, RHD4PRSHLSTAGRD1500 | -126.02d |
|  | 2308 | **RHD4-02-002-Z4-C012-Potable Network - PT** |  |  |  |  |  |
|  | 2322 | **RHD4-02-002-C012-(PT)-Concrete Encasement** |  |  |  |  |  |
|  | 2323 | **RHD4-02-002-Z4-C012-Irrigation Network - IRR** |  | 2027-08-18 | 2027-09-11 |  |  |
|  | 2326 | **RHD4-02-002-C012-(IRR)-HDPE Pipes - 200 mm diameter** |  |  |  |  |  |
|  | 6107 | **RHD4-02-002-C012-(IRR)-HDPE Pipes - 160 mm diameter** |  | 2027-08-18 | 2027-08-30 |  |  |
| RHD4CZ4C012IRR1100 |  | Excavation works for HDPE Pipline 160 mm - (RD-C-1 /2)-Z4-C012-IRR | 2d | 2027-08-18 | 2027-08-21 | RHD4ENSDZ4APPIRR140, RHD4CZ4C012RW2000, RHD4CZ4L09IRR3202 | -195.02d |
| RHD4CZ4C012IRR1200 |  | Bedding works for HDPE Pipline 160 mm - (RD-C-1 /2)-Z4-C012-IRR | 2d | 2027-08-21 | 2027-08-23 | RHD4CZ4C012IRR1100 | -195.02d |
| RHD4CZ4C012IRR1300 |  | Installing for HDPE Pipline 160 mm - (RD-C-1 /2)-Z4-C012-IRR | 2d | 2027-08-23 | 2027-08-25 | RHD4CZ4C012IRR1200 | -195.02d |
| RHD4CZ4C012IRR1400 |  | Primary Test for HDPE Pipline 160 mm - (RD-C-1 /2)-Z4-C012-IRR | 2d | 2027-08-25 | 2027-08-28 | RHD4CZ4C012IRR1300 | -195.02d |
| RHD4CZ4C012IRR1500 |  | Backfilling and warning tape works for HDPE Pipline 160 mm - (RD-C-1 /2)-Z4-C012-IRR | 2d | 2027-08-28 | 2027-08-30 | RHD4CZ4C012IRR1400 | -195.02d |
|  | 6111 | **RHD4-02-002-C012-(IRR)-HDPE Pipes - 315 mm diameter** |  | 2027-08-21 | 2027-09-08 |  |  |
| RHD4CZ4C012IRR1104 |  | Excavation works for HDPE Pipline 315 mm - (RD-C-1 /2)-Z4-C012-IRR | 4d | 2027-08-21 | 2027-08-25 | RHD4CZ4C012IRR1100 | -191.02d |
| RHD4CZ4C012IRR1204 |  | Bedding works for HDPE Pipline 315 mm - (RD-C-1 /2)-Z4-C012-IRR | 3d | 2027-08-25 | 2027-08-29 | RHD4CZ4C012IRR1104 | -190.02d |
| RHD4CZ4C012IRR1304 |  | Installing for HDPE Pipline 315 mm - (RD-C-1 /2)-Z4-C012-IRR | 4d | 2027-08-29 | 2027-09-02 | RHD4CZ4C012IRR1204 | -190.02d |
| RHD4CZ4C012IRR1404 |  | Primary Test for HDPE Pipline 315 mm - (RD-C-1 /2)-Z4-C012-IRR | 2d | 2027-09-02 | 2027-09-05 | RHD4CZ4C012IRR1304 | 219.98d |
| RHD4CZ4C012IRR1504 |  | Backfilling and warning tape works for HDPE Pipline 315 mm - (RD-C-1 /2)-Z4-C012-IRR | 3d | 2027-09-05 | 2027-09-08 | RHD4CZ4C012IRR1404 | 219.98d |
|  | 6115 | **RHD4-02-002-C012-(IRR)-Gate Valves (Direct Buried)** |  | 2027-08-31 | 2027-09-05 |  |  |
| RHD4CZ4C012IRR3100 |  | Installation for Direct Buried Gate Valves - (RD-C-1 /2)-Z4-C012-IRR | 2d | 2027-08-31 | 2027-09-02 | RHD4CZ4C012IRR1304 SS, RHD4CZ4C012IRR1304 FF, RHD4CZ4C012IRR1300 SS, RHD4CZ4C012IRR1300 FF | -173.02d |
| RHD4CZ4C012IRR3200 |  | Stem and Service box for Direct Buried Gate Valves - (RD-C-1 /2)-Z4-C012-IRR | 2d | 2027-09-02 | 2027-09-05 | RHD4CZ4C012IRR3100, RHD4CZ4C012IRR1500 | -173.02d |
|  | 6116 | **RHD4-02-002-C012-(IRR)-Butterfly Valve Chamber** |  | 2027-08-30 | 2027-09-08 |  |  |
| RHD4CZ4C012IRR2100 |  | Excavation and Bedding for Butterfly Valve Chamber for Irrigation Network - (RD-C-1 /2)-Z4-C012-IRR | 2d | 2027-08-30 | 2027-09-01 | RHD4CZ4C012IRR1104, RHD4CZ4C012IRR1500 | -195.02d |
| RHD4CZ4C012IRR2200 |  | PC works for Butterfly Valve Chamber for Irrigation Network - (RD-C-1 /2)-Z4-C012-IRR | 2d | 2027-09-01 | 2027-09-04 | RHD4CZ4C012IRR2100 | -195.02d |
| RHD4CZ4C012IRR2300 |  | Installation for Butterfly Valve Chamber for Irrigation Network - (RD-C-1 /2)-Z4-C012-IRR | 2d | 2027-09-04 | 2027-09-06 | RHD4CZ4C012IRR2200 | -195.02d |
| RHD4CZ4C012IRR2400 |  | Backfilling works for Butterfly Valve Chamber for Irrigation Network - (RD-C-1 /2)-Z4-C012-IRR | 2d | 2027-09-06 | 2027-09-08 | RHD4CZ4C012IRR2300 | -195.02d |
|  | 6117 | **RHD4-02-002-C012-(IRR)-Butterfly Valves** |  | 2027-09-02 | 2027-09-11 |  |  |
| RHD4CZ4C012IRR3101 |  | Installation for Butterfly Valves for Irrigation Network - (RD-C-1 /2)-Z4-C012-IRR | 2d | 2027-09-02 | 2027-09-05 | RHD4CZ4C012IRR1304 | -190.02d |
| RHD4CZ4C012IRR3201 |  | Stem and Service box for Butterfly Valves for Irrigation Network - (RD-C-1 /2)-Z4-C012-IRR | 2d | 2027-09-08 | 2027-09-11 | RHD4CZ4C012IRR3101, RHD4CZ4C012IRR2400 | -193.02d |
|  | 2330 | **RHD4-02-002-C012-(IRR)-HDPE Pipes - 450 mm diameter** |  |  |  |  |  |
|  | 2339 | **RHD4-02-002-C012-(IRR)-Concrete Encasement** |  |  |  |  |  |
|  | 2357 | **RHD4-02-002-Z4-C012-Medium Voltage Network - MV** |  | 2027-06-16 | 2027-07-15 |  |  |
|  | 2358 | **RHD4-02-002-C012-(MV)-Medium Voltage cable trench** |  | 2027-06-16 | 2027-06-28 |  |  |

| ID | WBS | Task | Duration | Start | Finish | Predecessors | Total float |
| --- | --- | --- | --- | --- | --- | --- | --- |
| RHD4CZ4C012MV1100 |  | Excavation for Medium Voltage Trench - (RD-C-1 /2)-Z4-C012-MV | 5d | 2027-06-16 | 2027-06-22 | RHD4ENSDZ4APPMV150, RHD4CZ4C012RD3100, RHD4CZ4L09MV1100 | -150.02d |
| RHD4CZ4C012MV1200 |  | Trench Backfilling for Medium Voltage Network - (RD-C-1 /2)-Z4-C012-MV | 5d | 2027-06-22 | 2027-06-28 | RHD4CZ4C012MV1100 | -150.02d |
|  | 1982 | **RHD4-02-002-C012-(MV)-Medium Voltage cables 3Cx 50 mm²** |  | 2027-06-22 | 2027-07-15 |  |  |
| RHD4CZ4C012MV3101 |  | Installation of Medium Voltage Cables 3Cx 50 mm² - (RD-C-1 /2)-Z4-C012-MV | 2d | 2027-06-22 | 2027-06-24 | RHD4CZ4C012RD3100, RHD4CZ4C012MV1100 | -110.02d |
| RHD4CZ4C012MV3301 |  | Testing of Medium Voltage Cables 3Cx 50 mm² - (RD-C-1 /2)-Z4-C012-MV | 2d | 2027-06-24 | 2027-06-27 | RHD4CZ4C012MV3101 | -110.02d |
| RHD4CZ4C012MV3401 |  | Termination of Medium Voltage Cables 3Cx 50 mm² - (RD-C-1 /2)-Z4-C012-MV | 2d | 2027-07-13 | 2027-07-15 | RHD4CZ4C012MV3301, RHD4CZ4C012MV5400 | -124.02d |
|  | 2359 | **RHD4-02-002-C012-(MV)-Medium Voltage duct banks** |  |  |  |  |  |
|  | 2360 | **RHD4-02-002-C012-(MV)-Medium Voltage cables 3Cx 500 mm²** |  | 2027-06-22 | 2027-07-08 |  |  |
| RHD4CZ4C012MV3100 |  | Installation of Medium Voltage Cables 3Cx 500 mm² - (RD-C-1 /2)-Z4-C012-MV | 6d | 2027-06-22 | 2027-06-29 | RHD4CZ4C012MV1100, RHD4PRSHLDOSMV1100, RHD4ENMSMV2000, RHD4ENMSMV2010, RHD4PRSHLSTAGMV1100 | -132.02d |
| RHD4CZ4C012MV3200 |  | Joints Installation of Medium Voltage Cables 3Cx 500 mm² - (RD-C-1 /2)-Z4-C012-MV | 2d | 2027-06-29 | 2027-07-01 | RHD4CZ4C012MV3100, RHD4PRSHLDOSMV1300, RHD4PRSHLSTAGMV1300 | -132.02d |
| RHD4CZ4C012MV3300 |  | Testing of Medium Voltage Cables 3Cx 500 mm² - (RD-C-1 /2)-Z4-C012-MV | 6d | 2027-07-01 | 2027-07-08 | RHD4CZ4C012MV3200, RHD4CZ4C012MV1200 | -132.02d |
|  | 1984 | **RHD4-02-002-C012-(MV)-Unit Substations** |  | 2027-06-28 | 2027-07-13 |  |  |
| RHD4CZ4C012MV5100 |  | Excavation for Unit Substations for Medium Voltage Network - (RD-C-1 /2)-Z4-C012-MV | 2d | 2027-06-28 | 2027-06-30 | RHD4CZ4C012MV1200 | -124.02d |
| RHD4CZ4C012MV5200 |  | Concrete Base Placement for Unit Substations for Medium Voltage Network - (RD-C-1 /2)-Z4-C012-MV | 2d | 2027-06-30 | 2027-07-03 | RHD4CZ4C012MV5100 | -124.02d |
| RHD4CZ4C012MV5300 |  | Installation for Fences and doors for Medium Voltage Network - (RD-C-1 /2)-Z4-C012-MV | 5d | 2027-07-03 | 2027-07-08 | RHD4CZ4C012MV5200 | -124.02d |
| RHD4CZ4C012MV5400 |  | Installation for Unit Substations for Medium Voltage Network - (RD-C-1 /2)-Z4-C012-MV | 4d | 2027-07-08 | 2027-07-13 | RHD4CZ4C012MV5300 | -124.02d |
|  | 5388 | **RHD4-02-002-C012-(MV)-Normally open Point (Outdoor Type)** |  |  |  |  |  |
|  | 2364 | **RHD4-02-002-Z4-C012-Low Voltage Network - LV** |  | 2027-07-08 | 2027-10-12 |  |  |
|  | 2367 | **RHD4-02-002-C012-(LV)-Low Voltage cables** |  | 2027-07-08 | 2027-07-22 |  |  |
| RHD4CZ4C012LV3100 |  | Excavation for Low Voltage Cables for Low Voltage Network - (RD-C-1 /2)-Z4-C012-LV | 4d | 2027-07-08 | 2027-07-13 | RHD4CZ4C012MV1200, RHD4ENSDZ4APPLV160, RHD4CZ4C012MV3300 | -132.02d |
| RHD4CZ4C012LV3200 |  | Cable Laying of Low Voltage Cables for Low Voltage Network - (RD-C-1 /2)-Z4-C012-LV | 3d | 2027-07-13 | 2027-07-17 | RHD4CZ4C012LV3100, RHD4PRSHLDOSLV1100, RHD4ENMSLV2000, RHD4ENMSLV2010, RHD4PRSHLSTAGLV1100 | -132.02d |
| RHD4CZ4C012LV3300 |  | Warning tape and Backfill for Low Voltage Cables for Low Voltage Network - (RD-C-1 /2)-Z4-C012-LV | 3d | 2027-07-17 | 2027-07-20 | RHD4CZ4C012LV3200 | -132.02d |
| RHD4CZ4C012LV3400 |  | Testing of Low Voltage Cables for Low Voltage Network - (RD-C-1 /2)-Z4-C012-LV | 2d | 2027-07-20 | 2027-07-22 | RHD4CZ4C012LV3300 | -132.02d |
|  | 4259 | **RHD4-02-002-C012-(LV)-Low Voltage Distribution Pillars** |  | 2027-07-22 | 2027-10-12 |  |  |
| RHD4CZ4C012LV4100 |  | Leveling for Distribution Pillars for Low Voltage Network - (RD-C-1 /2)-Z4-C012-LV | 2d | 2027-07-22 | 2027-07-25 | RHD4CZ4C012LV3400 | -132.02d |
| RHD4CZ4C012LV4200 |  | Lean Concrete for Distribution Pillars for Low Voltage Network - (RD-C-1 /2)-Z4-C012-LV | 2d | 2027-07-25 | 2027-07-27 | RHD4CZ4C012LV4100 | -132.02d |
| RHD4CZ4C012LV4300 |  | Installation of Distribution Pillars for Low Voltage Network - (RD-C-1 /2)-Z4-C012-LV | 2d | 2027-10-10 | 2027-10-12 | RHD4CZ4C012SL6100, RHD4CZ4C012LV4200 | -195.02d |
|  | 4260 | **RHD4-02-002-C012-(LV)-Low Voltage Distribution Pillars Earthing** |  |  |  |  |  |
|  | 2370 | **RHD4-02-002-Z4-C012-Street Lighting Network - SL** |  | 2027-06-28 | 2027-10-10 |  |  |
|  | 2371 | **RHD4-02-002-C012-(SL)-Street Lighting duct banks** |  | 2027-09-08 | 2027-09-18 |  |  |
| RHD4CZ4C012SL2100 |  | Excavation of Duct Banks for Street Lighting Network - (RD-C-1 /2)-Z4-C012-SL | 2d | 2027-09-08 | 2027-09-11 | RHD4ENSDZ4APPSL170, RHD4CZ4C012IRR2400 | -195.02d |
| RHD4CZ4C012SL2200 |  | Installation of Duct Banks for Street Lighting Network - (RD-C-1 /2)-Z4-C012-SL | 2d | 2027-09-11 | 2027-09-13 | RHD4CZ4C012SL2100 | -195.02d |
| RHD4CZ4C012SL2300 |  | Pouring of Duct Banks for Street Lighting Network - (RD-C-1 /2)-Z4-C012-SL | 2d | 2027-09-13 | 2027-09-15 | RHD4CZ4C012SL2200 | -195.02d |
| RHD4CZ4C012SL2400 |  | Backfilling of Duct Banks for Street Lighting Network - (RD-C-1 /2)-Z4-C012-SL | 2d | 2027-09-15 | 2027-09-18 | RHD4CZ4C012SL2300 | -195.02d |
|  | 2373 | **RHD4-02-002-C012-(SL)-Street Lighting cables** |  | 2027-06-28 | 2027-07-11 |  |  |
| RHD4CZ4C012SL3100 |  | Excavation for Street Lighting Cables for Street Lighting Network - (RD-C-1 /2)-Z4-C012-SL | 3d | 2027-06-28 | 2027-07-01 | RHD4ENSDZ4APPSL170, RHD4CZ4C012MV1200 | -127.02d |
| RHD4CZ4C012SL3200 |  | Cable Laying of Street Lighting Cables for Street Lighting Network - (RD-C-1 /2)-Z4-C012-SL | 3d | 2027-07-01 | 2027-07-05 | RHD4CZ4C012SL3100, RHD4ENMSSL2000, RHD4ENMSSL2010 | -127.02d |
| RHD4CZ4C012SL3300 |  | Warning tape and Backfill for Street Lighting Cables for Street Lighting Network - (RD-C-1 /2)-Z4-C012-SL | 3d | 2027-07-05 | 2027-07-08 | RHD4CZ4C012SL3200 | -127.02d |
| RHD4CZ4C012SL3400 |  | Testing of Street Lighting Cables for Street Lighting Network - (RD-C-1 /2)-Z4-C012-SL | 2d | 2027-07-08 | 2027-07-11 | RHD4CZ4C012SL3300 | -127.02d |
|  | 2374 | **RHD4-02-002-C012-(SL)-Street Lighting Poles** |  | 2027-09-18 | 2027-09-30 |  |  |
| RHD4CZ4C012SL1100 |  | Excavation for RC Base for Lighting Poles for Street Lighting Network - (RD-C-1 /2)-Z4-C012-SL | 2d | 2027-09-18 | 2027-09-20 | RHD4CZ4C012SL2400, RHD4CZ4C012MV1200, RHD4ENSDZ4APPSL170 | -195.02d |
| RHD4CZ4C012SL1200 |  | Installation for RC Base for Lighting Poles for Street Lighting Network - (RD-C-1 /2)-Z4-C012-SL | 2d | 2027-09-20 | 2027-09-22 | RHD4CZ4C012SL1100 | -195.02d |
| RHD4CZ4C012SL1300 |  | Backfill for RC Base for Lighting Poles for Street Lighting Network - (RD-C-1 /2)-Z4-C012-SL | 2d | 2027-09-22 | 2027-09-26 | RHD4CZ4C012SL1200 | -195.02d |
| RHD4CZ4C012SL1400 |  | Installation for Lighting Poles for Street Lighting Network - (RD-C-1 /2)-Z4-C012-SL | 2d | 2027-09-26 | 2027-09-28 | RHD4CZ4C012SL1300, RHD4PRSHLDOSSL1200, RHD4ENMSSL2000, RHD4ENMSSL2010, RHD4PRSHLSTAGSL1200 | -195.02d |
| RHD4CZ4C012SL1500 |  | Luminaire Installation for Lighting Poles for Street Lighting Network - (RD-C-1 /2)-Z4-C012-SL | 2d | 2027-09-28 | 2027-09-30 | RHD4CZ4C012SL1400, RHD4PRSHLDOSSL1300, RHD4PRSHLSTAGSL1300 | -195.02d |
|  | 5023 | **RHD4-02-002-C012-(SL)-Street Lighting Feeder Pillars** |  | 2027-09-30 | 2027-10-07 |  |  |
| RHD4CZ4C012SL4100 |  | Leveling for Distribution Pillars for Street Lighting Network - (RD-C-1 /2)-Z4-C012-SL | 2d | 2027-09-30 | 2027-10-03 | RHD4CZ4C012SL1500 | -195.02d |
| RHD4CZ4C012SL4200 |  | Lean Concrete for Distribution Pillars for Street Lighting Network - (RD-C-1 /2)-Z4-C012-SL | 2d | 2027-10-03 | 2027-10-05 | RHD4CZ4C012SL4100 | -195.02d |
| RHD4CZ4C012SL4300 |  | Installation of Distribution Pillars for Street Lighting Network - (RD-C-1 /2)-Z4-C012-SL | 2d | 2027-10-05 | 2027-10-07 | RHD4CZ4C012SL4200 | -195.02d |
|  | 5024 | **RHD4-02-002-C012-(SL)-Street Lighting Earthing System** |  | 2027-10-07 | 2027-10-10 |  |  |
| RHD4CZ4C012SL6100 |  | Installation of Earthing for Lighting Poles and Fedder Pillers for Street Lighting Network - (RD-C-1 /2)-Z4-C012-SL | 2d | 2027-10-07 | 2027-10-10 | RHD4CZ4C012MV3401, RHD4CZ4C012SL4300 | -195.02d |
|  | 2372 | **RHD4-02-002-C012-(SL)-Street Lighting Drawpit** |  | 2027-09-20 | 2027-09-26 |  |  |
| RHD4CZ4C012SL5100 |  | Excavation of Drawpit size 600x600x900mm for Street Lighting Network - (RD-C-1 /2)-Z4-C012-SL | 2d | 2027-09-20 | 2027-09-22 | RHD4CZ4C012SL2300, RHD4ENSDZ4APPSL170, RHD4CZ4C012SL1100, RHD4CZ4C012SL3400 | -188.02d |
| RHD4CZ4C012SL5200 |  | Installation of Drawpit size 600x600x900mm for Street Lighting Network - (RD-C-1 /2)-Z4-C012-SL | 2d | 2027-09-22 | 2027-09-26 | RHD4CZ4C012SL5100, RHD4PRSHLDOSSL1400, RHD4PRSHLSTAGSL1400, RHD4CZ4C012IRR3200 | -188.02d |
|  | 2382 | **RHD4-02-002-Z4-C012-Telecommunications Network - TC** |  | 2027-09-26 | 2027-10-07 |  |  |
|  | 2383 | **RHD4-02-002-C012-(TC)-Telecommunications Ducts** |  | 2027-09-26 | 2027-10-07 |  |  |
| RHD4CZ4C012TC2100 |  | Excavation of HDPE Ducts for Telecom Network - (RD-C-1 /2)-Z4-C012-TC | 3d | 2027-09-26 | 2027-09-29 | RHD4ENSDZ4APPTC190, RHD4CZ4C012SL5100, RHD4CZ4C012SL5200 | -188.02d |
| RHD4CZ4C012TC2200 |  | Installation of HDPE Ducts for Telecom Network - (RD-C-1 /2)-Z4-C012-TC | 4d | 2027-09-29 | 2027-10-04 | RHD4CZ4C012TC2100, RHD4PRSHLDOSTC1000, RHD4PRSHLSTAGTC1000 | -174.02d |
| RHD4CZ4C012TC2400 |  | Backfilling of HDPE Ducts for Telecom Network - (RD-C-1 /2)-Z4-C012-TC | 3d | 2027-10-04 | 2027-10-07 | RHD4CZ4C012TC2200, RHD4CZ4C012TC5200 | -157.02d |
|  | 2384 | **RHD4-02-002-C012-(TC)-Telecommunications Manholes** |  | 2027-09-29 | 2027-10-04 |  |  |
| RHD4CZ4C012TC5100 |  | Excavation for Manholes for Telecom Network - (RD-C-1 /2)-Z4-C012-TC | 2d | 2027-09-29 | 2027-10-02 | RHD4CZ4C012TC2100, RHD4ENSDZ4APPTC190 | -176.02d |
| RHD4CZ4C012TC5200 |  | Installation of Manholes for Telecom Network - (RD-C-1 /2)-Z4-C012-TC | 2d | 2027-10-02 | 2027-10-04 | RHD4CZ4C012TC5100, RHD4CZ4C012TC2200 SS, RHD4PRSHLDOSTC1200, RHD4PRSHLSTAGTC1200 | -176.02d |
|  | 2385 | **RHD4-02-002-C012-(TC)-Telecomminications Road Crossings** |  |  |  |  |  |
|  | 2386 | **RHD4-02-002-Z4-C012-Information and Communication Technologies - ICT** |  | 2027-02-11 | 2027-11-01 |  |  |
|  | 2387 | **RHD4-02-002-C012-(ICT)-Information and Communication Technologies Ducts** |  | 2027-09-29 | 2027-11-01 |  |  |
| RHD4CZ4C012ICT2100 |  | Excavation of HDPE Ducts for ICT Network - (RD-C-1 /2)-Z4-C012-ICT | 8d | 2027-09-29 | 2027-10-09 | RHD4CZ4C012ICT3400, RHD4ENSDZ4APPICT200, RHD4CZ4C012TC2100 | -188.02d |
| RHD4CZ4C012ICT2200 |  | Installation of HDPE Ducts for ICT Network - (RD-C-1 /2)-Z4-C012-ICT | 12d | 2027-10-09 | 2027-10-23 | RHD4CZ4C012ICT2100, RHD4PRSHLDOSICT1000, RHD4PRSHLSTAGICT1000 | -188.02d |
| RHD4CZ4C012ICT2400 |  | Backfilling of HDPE Ducts for ICT Network - (RD-C-1 /2)-Z4-C012-ICT | 8d | 2027-10-23 | 2027-11-01 | RHD4CZ4C012ICT2200, RHD4CZ4C012ICT5200 | -188.02d |
|  | 2388 | **RHD4-02-002-C012-(ICT)-Information and Communication Technologies Manholes** |  | 2027-10-09 | 2027-10-13 |  |  |
| RHD4CZ4C012ICT5100 |  | Excavation for Manholes for ICT Network - (RD-C-1 /2)-Z4-C012-ICT | 2d | 2027-10-09 | 2027-10-11 | RHD4CZ4C012ICT2100, RHD4ENSDZ4APPICT200, RHD4CZ4C012TC5200 | -180.02d |

| ID | WBS | Task | Duration | Start | Finish | Predecessors | Complete | Total float |
| --- | --- | --- | --- | --- | --- | --- | --- | --- |
| RHD4CZ4C012ICT5200 |  | Installation of Manholes for ICT Network - (RD-C-1 /2)-Z4-C012-ICT | 2d | 2027-10-11 | 2027-10-13 | RHD4CZ4C012ICT5100, RHD4PRSHLDOSICT1200, RHD4PRSHLSTAGICT1200 |  | -180.02d |
|  | 2389 | **RHD4-02-002-C012-(ICT)-Information and Communication Technologies Road Crossings** |  | 2027-02-11 | 2027-02-21 |  |  |  |
| RHD4CZ4C012ICT3100 |  | Excavation for Road Crossings for ICT Network - (RD-C-1 /2)-Z4-C012-ICT | 2d | 2027-02-11 | 2027-02-14 | RHD4ENSDZ4APPICT200, RHD4CZ4L09ST3102 |  | -189.02d |
| RHD4CZ4C012ICT3200 |  | Installation of Road Crossings for ICT Network - (RD-C-1 /2)-Z4-C012-ICT | 2d | 2027-02-14 | 2027-02-16 | RHD4CZ4C012ICT3100, RHD4PRSHLDOSICT1100, RHD4PRSHLSTAGICT1100 |  | -189.02d |
| RHD4CZ4C012ICT3300 |  | Pouring of Road Crossings for ICT Network - (RD-C-1 /2)-Z4-C012-ICT | 2d | 2027-02-16 | 2027-02-18 | RHD4CZ4C012ICT3200 |  | -189.02d |
| RHD4CZ4C012ICT3400 |  | Backfilling of Road Crossings for ICT Network - (RD-C-1 /2)-Z4-C012-ICT | 2d | 2027-02-18 | 2027-02-21 | RHD4CZ4C012ICT3300 |  | -189.02d |
|  | 2377 | **RHD4-02-002-Z4-C012-Landscape Network - LS** |  |  |  |  |  |  |
|  | 2378 | **RHD4-02-002-C012-(LS)-Landscape Lighting cables** |  |  |  |  |  |  |
|  | 2379 | **RHD4-02-002-C012-(LS)-Landscape Feeder Pillars** |  |  |  |  |  |  |
|  | 2380 | **RHD4-02-002-C012-(LS)-Landscape Bollard Poles** |  |  |  |  |  |  |
|  | 2381 | **RHD4-02-002-C012-(LS)-Landscape Feeder Pillars Earthing** |  |  |  |  |  |  |
|  | 2390 | **RHD4-02-002-Z4-C012-Security Network - CCTV** |  |  |  |  |  |  |
|  | 2391 | **RHD4-02-002-C012-(CCTV)-Civil Works** |  |  |  |  |  |  |
|  | 7324 | **RHD4-02-002-Z8** |  | 2026-07-15 | 2028-11-02 |  |  |  |
|  | 7703 | **RHD4-02-002-Z8-A011** |  | 2026-07-15 | 2028-04-03 |  |  |  |
|  | 7778 | **RHD4-02-002-Z8-A011-Crossings Potable Network - PTCr** |  |  |  |  |  |  |
|  | 7782 | **RHD4-02-002-A011-(PTCr)-HDPE Pipes - 400 mm diameter** |  |  |  |  |  |  |
|  | 7785 | **RHD4-02-002-A011-(PTCr)-Butterfly Valve Chamber** |  |  |  |  |  |  |
|  | 7786 | **RHD4-02-002-A011-(PTCr)-Butterfly Valves** |  |  |  |  |  |  |
|  | 7789 | **RHD4-02-002-A011-(PTCr)-Air Valve Chambers** |  |  |  |  |  |  |
|  | 7790 | **RHD4-02-002-A011-(PTCr)-Air Valves** |  |  |  |  |  |  |
|  | 7791 | **RHD4-02-002-A011-(PTCr)-Fire Hydrant** |  |  |  |  |  |  |
|  | 7825 | **RHD4-02-002-Z8-A011-Crossings Irrigation Network - IRRC** |  |  |  |  |  |  |
|  | 7826 | **RHD4-02-002-A011-(IRRC)-HDPE Pipes - 160 mm diameter** |  |  |  |  |  |  |
|  | 7833 | **RHD4-02-002-A011-(IRRC)-HDPE Pipes - 500 mm diameter** |  |  |  |  |  |  |
|  | 7834 | **RHD4-02-002-A011-(IRRC)-Gate Valves (Direct Buried)** |  |  |  |  |  |  |
|  | 7835 | **RHD4-02-002-A011-(IRRC)-Butterfly Valve Chamber** |  |  |  |  |  |  |
|  | 7836 | **RHD4-02-002-A011-(IRRC)-Butterfly Valves** |  |  |  |  |  |  |
|  | 7839 | **RHD4-02-002-A011-(IRRC)-Air Valve Chamber** |  |  |  |  |  |  |
|  | 7840 | **RHD4-02-002-A011-(IRRC)-Air Valves** |  |  |  |  |  |  |
|  | 7882 | **RHD4-02-002-Z8-A011-Road Works - RD** |  | 2026-07-15 | 2028-04-03 |  |  |  |
|  | 7883 | **RHD4-02-002-A011-(RD)-Subgrade** |  | 2026-07-15 | 2026-07-27 |  |  |  |
| RHD4CZ8A011RD1100 |  | Supply, lay and compaction subgrade compacted thickness 300 mm for Roads - (RD-A-1 /1)-Z8-A011-RD | 5d | 2026-07-15 A | 2026-07-27 A | RHD4ENSDZ8APPRD220, RHD4ENSDZ8APPEW100 SS, RHD4CZ8A011TC3400 | 100% |  |
|  | 7884 | **RHD4-02-002-A011-(RD)-Aggregate Base Course** |  | 2026-10-20 | 2027-03-15 |  |  |  |
| RHD4CZ8A011RD2100 |  | Supply, lay and compaction Aggregate base course compacted thickness 300 mmfor Roads - (RD-A-1 /1)-Z8-A011-RD | 11d | 2026-10-20 A | 2027-03-15 | RHD4PRSHLDOSRD1000, RHD4PRSHLSTAGRD1000, RHD4CZ8A011RD1100 | 50% | -172.02d |
|  | 7885 | **RHD4-02-002-A011-(RD)-Bituminous base course Two Layers, including (MC1)&(RC2)** |  | 2027-03-15 | 2028-03-15 |  |  |  |
| RHD4CZ8A011RD3100 |  | Supply, lay and Asphaltic base course including Prime Coat (MC1) for 1st Layer - (RD-A-1 /1)-Z8-A011-RD | 6d | 2027-03-15 | 2027-03-22 | RHD4PRSHLDOSRD1100, RHD4ENMSASPH2000, RHD4ENMSASPH2010, RHD4PRSHLSTAGRD1100, RHD4CZ8A011RD2100, RHD4CZ6A015RD3100 |  | -153.02d |
| RHD4CZ8A011RD3200 |  | Supply, lay and Asphaltic base course including Tack Coat (RC2) for 2nd Layer - (RD-A-1 /1)-Z8-A011-RD | 6d | 2028-03-08 | 2028-03-15 | RHD4PRSHLDOSRD1100, RHD4PRSHLSTAGRD1100, RHD4CZ8A011CCTV6100 |  | -111.02d |
|  | 7887 | **RHD4-02-002-A011-(RD)-Precast Concrete Curb** |  | 2028-03-15 | 2028-03-20 |  |  |  |
| RHD4CZ8A011RD5100 |  | Supply and installation Precast Concrete Kerb for Roads - (RD-A-1 /1)-Z8-A011-RD | 4d | 2028-03-15 | 2028-03-20 | RHD4PRSHLDOSRD1200, RHD4ENMSRD2000, RHD4ENMSRD2010, RHD4PRSHLSTAGRD1200, RHD4CZ8A011RD3200 |  | -111.02d |
|  | 7890 | **RHD4-02-002-A011-(RD)-Traffic Signage** |  | 2028-03-20 | 2028-03-27 |  |  |  |
| RHD4CZ8A011RD8100 |  | Installation of Traffic Signage for Road Network - (RD-A-1 /1)-Z8-A011-RD | 6d | 2028-03-20 | 2028-03-27 | RHD4PRSHLDOSRD1600, RHD4PRSHLSTAGRD1600, RHD4CZ8A011RD5100, RHD4CZ8A011PT2401 |  | -98.02d |
|  | 7888 | **RHD4-02-002-A011-(RD)-Precast Interlocking Block Pavers** |  |  |  |  |  |  |
|  | 7886 | **RHD4-02-002-A011-(RD)-Bituminous concrete wearing course including tack coat (RC2)** |  | 2028-03-20 | 2028-03-23 |  |  |  |
| RHD4CZ8A011RD4100 |  | Supply, lay and compaction Asphaltic wearing course including tack Coat (RC2)for Road Network - (RD-A-1 /1)-Z8-A011-RD | 3d | 2028-03-20 | 2028-03-23 | RHD4CZ8A011RD5100 |  | -111.02d |
|  | 7889 | **RHD4-02-002-A011-(RD)-Pavement Marking** |  | 2028-03-28 | 2028-04-03 |  |  |  |
| RHD4CZ8A011RD7100 |  | Pavement Markings for Road Network - (RD-A-1 /1)-Z8-A011-RD | 5d | 2028-03-28 | 2028-04-03 | RHD4PRSHLDOSRD1500, RHD4PRSHLSTAGRD1500, RHD4CZ8A011RD4100, RHD4CZ7RA03RD7100 |  | -115.02d |
|  | 7707 | **RHD4-02-002-Z8-A011-Storm Network - ST** |  | 2026-08-04 | 2027-06-05 |  |  |  |
|  | 7725 | **RHD4-02-002-A011-(ST)-MH Works - 1500 mm diameter** |  | 2026-08-04 | 2027-05-05 |  |  |  |
| RHD4CZ8A011ST3101 |  | Excavation and PC Blinding works for MH 1500 mm - (RD-A-1 /1)-Z8-A011-ST | 5d | 2026-08-04 A | 2026-09-04 A | RHD4ENSDZ8APPST110, RHD4ENMSST2000, RHD4CZ8A011RW3000, RHD4CZ8A011RD1100, RHD4CZ8A011ST3102 | 100% |  |
| RHD4CZ8A011ST3201 |  | Installation of Base for MH 1500 mm - (RD-A-1 /1)-Z8-A011-ST | 2d | 2026-09-19 A | 2026-09-20 A | RHD4PRSHLSTAGST1607, RHD4CZ8A011ST3101 | 100% |  |
| RHD4CZ8A011ST3301 |  | MH Ring and C.Slab works and Backfilling works for MH 1500 mm - (RD-A-1 /1)-Z8-A011-ST | 5d | 2026-09-19 A | 2027-04-25 | RHD4PRSHLDOSST1607, RHD4CZ8A011ST3201 | 30% | -110.02d |
| RHD4CZ8A011ST3401 |  | Steel Cover for MH 1500 mm - (RD-A-1 /1)-Z8-A011-ST | 4d | 2027-04-25 | 2027-04-29 | RHD4PRSHLDOSST1707, RHD4PRSHLSTAGST1707, RHD4CZ8A011ST3301 |  | -110.02d |
| RHD4CZ8A011ST3501 |  | Finishing, Benching, Testing works for MH 1500 mm - (RD-A-1 /1)-Z8-A011-ST | 5d | 2027-04-29 | 2027-05-05 | RHD4CZ8A011ST3401 |  | -110.02d |
|  | 3754 | **RHD4-02-002-A011-(ST)-MH Works - 2000 mm diameter** |  | 2026-08-04 | 2027-05-06 |  |  |  |
| RHD4CZ8A011ST3102 |  | Excavation and PC Blinding works for MH 2000 mm - (RD-A-1 /1)-Z8-A011-ST | 4d | 2026-08-04 A | 2026-09-04 A | RHD4CZ8A011RD1100, RHD4CZ8A011ST2100 | 100% |  |
| RHD4CZ8A011ST3202 |  | Installation of Base for MH 2000 mm - (RD-A-1 /1)-Z8-A011-ST | 4d | 2026-09-19 A | 2027-04-24 | RHD4CZ8A011ST3102 | 75% | -117.02d |
| RHD4CZ8A011ST3302 |  | MH Ring and C.Slab works and Backfilling works for MH 2000 mm - (RD-A-1 /1)-Z8-A011-ST | 4d | 2026-09-30 A | 2027-04-28 | RHD4CZ8A011ST3202 | 25% | -117.02d |
| RHD4CZ8A011ST3402 |  | Steel Cover for MH 2000 mm - (RD-A-1 /1)-Z8-A011-ST | 3d | 2027-04-28 | 2027-05-02 | RHD4CZ8A011ST3302 |  | -117.02d |
| RHD4CZ8A011ST3502 |  | Finishing, Benching, Testing works for MH 2000 mm - (RD-A-1 /1)-Z8-A011-ST | 4d | 2027-05-02 | 2027-05-06 | RHD4CZ8A011ST3402 |  | -117.02d |
|  | 6393 | **RHD4-02-002-A011-(ST)-GRP Pipes - 1300 mm diameter** |  | 2026-08-04 | 2027-04-10 |  |  |  |
| RHD4CZ8A011ST1109 |  | Excavation works for GRP Pipe Line 1300 mm - (RD-A-1 /1)-Z8-A011-ST | 3d | 2026-08-04 A | 2026-08-13 A | RHD4CZ8A011RD1100, RHD4CZ6A015IRR1100, RHD4CZ4L09RD3100, RHD4CZ8A011RD3100 | 100% |  |
| RHD4CZ8A011ST1209 |  | Bedding works for GRP Pipe Line 1300 mm - (RD-A-1 /1)-Z8-A011-ST | 3d | 2026-08-29 A | 2026-08-31 A | RHD4CZ8A011ST1109 | 100% |  |
| RHD4CZ8A011ST1309 |  | Installing for GRP Pipe Line 1300 mm - (RD-A-1 /1)-Z8-A011-ST | 2d | 2026-08-30 A | 2026-09-05 A | RHD4CZ8A011ST1209 | 100% |  |
| RHD4CZ8A011ST1509 |  | Backfilling and warning tape works for GRP Pipe Line 1300 mm - (RD-A-1 /1)-Z8-A011-ST | 3d | 2026-09-06 A | 2026-09-09 A | RHD4CZ8A011ST1409 | 100% |  |
| RHD4CZ8A011ST1409 |  | Primary Test for GRP Pipe Line 1300 mm - (RD-A-1 /1)-Z8-A011-ST | 2d | 2027-04-07 | 2027-04-10 | RHD4CZ8A011ST1309 |  | -117.02d |
|  | 7724 | **RHD4-02-002-A011-(ST)-MH Works - 1200 mm diameter** |  | 2026-08-04 | 2027-04-28 |  |  |  |
| RHD4CZ8A011ST3100 |  | Excavation and PC Blinding works for MH 1200 mm - (RD-A-1 /1)-Z8-A011-ST | 4d | 2026-08-04 A | 2026-09-04 A | RHD4ENSDZ8APPST110, RHD4ENMSST2000, RHD4ENMSST2010, RHD4CZ8A011RD1100, RHD4CZ8A011ST1109, RHD4CZ8A011ST3101 | 100% |  |
| RHD4CZ8A011ST3200 |  | Installation of Base for MH 1200 mm - (RD-A-1 /1)-Z8-A011-ST | 4d | 2026-09-05 A | 2026-09-24 A | RHD4PRSHLSTAGST1607, RHD4CZ8A011ST3100 | 100% |  |
| RHD4CZ8A011ST3300 |  | MH Ring and C.Slab works and Backfilling works for MH 1200 mm - (RD-A-1 /1)-Z8-A011-ST | 4d | 2026-09-19 A | 2026-09-22 A | RHD4PRSHLDOSST1607, RHD4CZ8A011ST3200 | 100% |  |

| ID | WBS | Task | Duration | Start | Finish | Predecessors | Complete | Total float |
| --- | --- | --- | --- | --- | --- | --- | --- | --- |
| RHD4CZ8A011ST3400 |  | Steel Cover for MH 1200 mm - (RD-A-1 /1)-Z8-A011-ST | 4d | 2027-04-19 | 2027-04-24 | RHD4PRSHLDOSST1707, RHD4PRSHLSTAGST1707, RHD4CZ8A011ST3300 |  | -100.02d |
| RHD4CZ8A011ST3500 |  | Finishing, Benching, Testing works for MH 1200 mm - (RD-A-1 /1)-Z8-A011-ST | 4d | 2027-04-24 | 2027-04-28 | RHD4CZ8A011ST3400 |  | -100.02d |
|  | 7713 | **RHD4-02-002-A011-(ST)-GRP Pipes - 900 mm diameter** |  |  |  |  |  |  |
|  | 7712 | **RHD4-02-002-A011-(ST)-GRP Pipes - 800 mm diameter** |  | 2026-08-04 | 2027-04-10 |  |  |  |
| RHD4CZ8A011ST1104 |  | Excavation works for GRP Pipe Line 800 mm - (RD-A-1 /1)-Z8-A011-ST | 3d | 2026-08-04 A | 2026-08-28 A | RHD4ENSDZ8APPST110, RHD4CZ8A011RD1100, RHD4CZ8A011ST1109 | 100% |  |
| RHD4CZ8A011ST1204 |  | Bedding works for GRP Pipe Line 800 mm - (RD-A-1 /1)-Z8-A011-ST | 3d | 2026-08-29 A | 2026-08-31 A | RHD4CZ8A011ST1104 | 100% |  |
| RHD4CZ8A011ST1304 |  | Installing for GRP Pipe Line 800 mm - (RD-A-1 /1)-Z8-A011-ST | 2d | 2026-09-01 A | 2026-09-02 A | RHD4PRSHLSTAGST1007, RHD4CZ8A011ST1204, RHD4PRSHLDOSST1607, RHD4PRSHLPOST1000, RHD4PRSHLDOSST1007 | 100% |  |
| RHD4CZ8A011ST1504 |  | Backfilling and warning tape works for GRP Pipe Line 800 mm - (RD-A-1 /1)-Z8-A011-ST | 3d | 2026-09-02 A | 2026-09-03 A | RHD4CZ8A011ST1404 | 100% |  |
| RHD4CZ8A011ST1404 |  | Primary Test for GRP Pipe Line 800 mm - (RD-A-1 /1)-Z8-A011-ST | 2d | 2027-04-07 | 2027-04-10 | RHD4CZ8A011ST1304 |  | -117.02d |
|  | 7711 | **RHD4-02-002-A011-(ST)-GRP Pipes - 700 mm diameter** |  | 2026-08-29 | 2027-04-10 |  |  |  |
| RHD4CZ8A011ST1103 |  | Excavation works for GRP Pipe Line 700 mm - (RD-A-1 /1)-Z8-A011-ST | 2d | 2026-08-29 A | 2026-08-30 A | RHD4ENSDZ8APPST110, RHD4CZ8A011RD1100, RHD4CZ8A011ST1104 | 100% |  |
| RHD4CZ8A011ST1203 |  | Bedding works for GRP Pipe Line 700 mm - (RD-A-1 /1)-Z8-A011-ST | 2d | 2026-08-31 A | 2026-09-01 A | RHD4CZ8A011ST1103 | 100% |  |
| RHD4CZ8A011ST1303 |  | Installing for GRP Pipe Line 700 mm - (RD-A-1 /1)-Z8-A011-ST | 2d | 2026-09-01 A | 2026-09-02 A | RHD4PRSHLSTAGST1007, RHD4CZ8A011ST1203, RHD4CZ8A011ST1304, RHD4PRSHLDOSST1607, RHD4PRSHLPOST1000, RHD4PRSHLDOSST1007 | 100% |  |
| RHD4CZ8A011ST1503 |  | Backfilling and warning tape works for GRP Pipe Line 700 mm - (RD-A-1 /1)-Z8-A011-ST | 2d | 2026-09-02 A | 2026-09-03 A | RHD4CZ8A011ST1403, RHD4CZ8A011ST1504 | 100% |  |
| RHD4CZ8A011ST1403 |  | Primary Test for GRP Pipe Line 700 mm - (RD-A-1 /1)-Z8-A011-ST | 2d | 2027-04-07 | 2027-04-10 | RHD4CZ8A011ST1303 |  | -117.02d |
|  | 7710 | **RHD4-02-002-A011-(ST)-GRP Pipes - 600 mm diameter** |  | 2026-08-29 | 2027-04-10 |  |  |  |
| RHD4CZ8A011ST1102 |  | Excavation works for GRP Pipe Line 600 mm - (RD-A-1 /1)-Z8-A011-ST | 2d | 2026-08-29 A | 2026-08-30 A | RHD4ENSDZ8APPST110, RHD4CZ8A011RD1100, RHD4CZ8A011ST1103 | 100% |  |
| RHD4CZ8A011ST1202 |  | Bedding works for GRP Pipe Line 600 mm - (RD-A-1 /1)-Z8-A011-ST | 2d | 2026-08-31 A | 2026-09-01 A | RHD4CZ8A011ST1102 | 100% |  |
| RHD4CZ8A011ST1302 |  | Installing for GRP Pipe Line 600 mm - (RD-A-1 /1)-Z8-A011-ST | 2d | 2026-09-01 A | 2026-09-02 A | RHD4PRSHLSTAGST1007, RHD4CZ8A011ST1202, RHD4CZ8A011ST1303, RHD4PRSHLDOSST1607, RHD4PRSHLPOST1000, RHD4PRSHLDOSST1007 | 100% |  |
| RHD4CZ8A011ST1502 |  | Backfilling and warning tape works for GRP Pipe Line 600 mm - (RD-A-1 /1)-Z8-A011-ST | 2d | 2026-09-02 A | 2026-09-04 A | RHD4CZ8A011ST1402 | 100% |  |
| RHD4CZ8A011ST1402 |  | Primary Test for GRP Pipe Line 600 mm - (RD-A-1 /1)-Z8-A011-ST | 2d | 2027-04-07 | 2027-04-10 | RHD4CZ8A011ST1302 |  | -117.02d |
|  | 7709 | **RHD4-02-002-A011-(ST)-GRP Pipes - 500 mm diameter** |  | 2026-08-29 | 2027-04-10 |  |  |  |
| RHD4CZ8A011ST1101 |  | Excavation works for GRP Pipe Line 500 mm - (RD-A-1 /1)-Z8-A011-ST | 2d | 2026-08-29 A | 2026-08-31 A | RHD4ENSDZ8APPST110, RHD4CZ8A011RD1100, RHD4CZ8A011ST1102 | 100% |  |
| RHD4CZ8A011ST1201 |  | Bedding works for GRP Pipe Line 500 mm - (RD-A-1 /1)-Z8-A011-ST | 2d | 2026-09-01 A | 2026-09-02 A | RHD4CZ8A011ST1101 | 100% |  |
| RHD4CZ8A011ST1301 |  | Installing for GRP Pipe Line 500 mm - (RD-A-1 /1)-Z8-A011-ST | 2d | 2026-09-02 A | 2026-09-03 A | RHD4PRSHLSTAGST1007, RHD4CZ8A011ST1201, RHD4CZ8A011ST1302, RHD4PRSHLDOSST1607, RHD4PRSHLPOST1000, RHD4PRSHLDOSST1007 | 100% |  |
| RHD4CZ8A011ST1501 |  | Backfilling and warning tape works for GRP Pipe Line 500 mm - (RD-A-1 /1)-Z8-A011-ST | 2d | 2026-09-06 A | 2026-09-07 A | RHD4CZ8A011ST1401 | 100% |  |
| RHD4CZ8A011ST1401 |  | Primary Test for GRP Pipe Line 500 mm - (RD-A-1 /1)-Z8-A011-ST | 2d | 2027-04-07 | 2027-04-10 | RHD4CZ8A011ST1301, RHD4CZ9C071ST1502 |  | -153.02d |
|  | 7708 | **RHD4-02-002-A011-(ST)-GRP Pipes - 400 mm diameter** |  | 2026-10-22 | 2027-04-21 |  |  |  |
| RHD4CZ8A011ST1100 |  | Excavation works for GRP Pipe Line 400 mm - (RD-A-1 /1)-Z8-A011-ST | 2d | 2026-10-22 A | 2027-04-12 | RHD4ENSDZ8APPST110, RHD4CZ8A011RD1100, RHD4CZ8A011ST1101, RHD4CZ8A011ST1501 | 16% | -153.02d |
| RHD4CZ8A011ST1200 |  | Bedding works for GRP Pipe Line 400 mm - (RD-A-1 /1)-Z8-A011-ST | 2d | 2026-10-24 A | 2027-04-14 | RHD4CZ8A011ST1100 | 23% | -122.02d |
| RHD4CZ8A011ST1300 |  | Installing for GRP Pipe Line 400 mm - (RD-A-1 /1)-Z8-A011-ST | 2d | 2026-10-26 A | 2027-04-17 | RHD4PRSHLSTAGST1007, RHD4CZ8A011ST1200, RHD4CZ8A011ST1301, RHD4PRSHLDOSST1607, RHD4PRSHLPOST1000, RHD4PRSHLDOSST1007 | 25% | -122.02d |
| RHD4CZ8A011ST1500 |  | Backfilling and warning tape works for GRP Pipe Line 400 mm - (RD-A-1 /1)-Z8-A011-ST | 2d | 2026-10-28 A | 2027-04-21 | RHD4CZ8A011ST1400 | 22% | -122.02d |
| RHD4CZ8A011ST1400 |  | Primary Test for GRP Pipe Line 400 mm - (RD-A-1 /1)-Z8-A011-ST | 2d | 2027-04-17 | 2027-04-19 | RHD4CZ8A011ST1300 |  | -122.02d |
|  | 7722 | **RHD4-02-002-A011-(ST)-UPVC Pipes - 300 mm diameter** |  | 2026-08-23 | 2027-06-05 |  |  |  |
| RHD4CZ8A011ST2100 |  | Excavation works for UPVC Pipe Line 300 mm - (RD-A-1 /1)-Z8-A011-ST | 6d | 2026-08-23 A | 2027-04-19 | RHD4ENSDZ8APPST110, RHD4CZ8A011RD1100, RHD4CZ8A011ST1100 | 76% | -153.02d |
| RHD4CZ8A011ST2200 |  | Bedding works for UPVC Pipe Line 300 mm - (RD-A-1 /1)-Z8-A011-ST | 5d | 2026-08-25 A | 2027-04-25 | RHD4CZ8A011ST2100 | 82% | -127.02d |
| RHD4CZ8A011ST2300 |  | Installing for UPVC Pipe Line 300 mm - (RD-A-1 /1)-Z8-A011-ST | 6d | 2026-08-29 A | 2027-05-02 | RHD4PRSHLDOSST1107, RHD4PRSHLDOSRD1000, RHD4PRSHLDOSSW1107, RHD4PRSHLDOSSW1308, RHD4PRSHLDOSST1204, RHD4PRSHLSTAGST1107, RHD4PRSHLSTAGRD1000, RHD4CZ9L05RW2000, RHD4CZ9L06RW2000, RHD4CZ8A011ST2200, RHD4ENMSEW2000, RHD4ENMSEW2010, RHD4ENSDZ9APPEW100 SS, RHD4CZ9L05RW1000, RHD4CZ9L06RW1000 | 84% | -127.02d |
| RHD4CZ8A011ST2500 |  | Backfilling and warning tape works for UPVC Pipe Line 300 mm - (RD-A-1 /1)-Z8-A011-ST | 7d | 2026-09-19 A | 2027-06-05 | RHD4CZ8A011ST2400, RHD4CZ8A011ST6100 | 83% | -141.02d |
| RHD4CZ8A011ST2400 |  | Primary Test for UPVC Pipe Line 300 mm - (RD-A-1 /1)-Z8-A011-ST | 4d | 2027-05-02 | 2027-05-06 | RHD4CZ8A011ST2300 |  | -127.02d |
|  | 7730 | **RHD4-02-002-A011-(ST)-Concrete Encasement** |  | 2027-05-25 | 2027-05-27 |  |  |  |
| RHD4CZ8A011ST6100 |  | Pipe Encasement for Storm Pipelines - (RD-A-1 /1)-Z8-A011-ST | 2d | 2027-05-25 | 2027-05-27 | RHD4CZ8A011ST2300 SS, RHD4CZ8A011ST2300 FF, RHD4CZ8A011ST2200, RHD4CZ8A011MV2400 |  | -141.02d |
|  | 7731 | **RHD4-02-002-Z8-A011-Catch Basin - ST** |  | 2026-08-29 | 2027-08-22 |  |  |  |
|  | 7732 | **RHD4-02-002-A011-(ST)-Single Catch Basin Works** |  | 2026-08-29 | 2027-08-22 |  |  |  |
| RHD4CZ8A011ST7100 |  | Excavation works for Single Catch Basin - (RD-A-1 /1)-Z8-A011-ST | 6d | 2026-08-29 A | 2027-04-19 | RHD4ENSDZ8APPST110, RHD4CZ8A011RD1100, RHD4CZ8A011ST2100 SS | 91% | -153.02d |
| RHD4CZ8A011ST7200 |  | PC Blinding, Installation and Pipe connection for Single Catch Basin - (RD-A-1 /1)-Z8-A011-ST | 6d | 2026-09-05 A | 2027-04-26 | RHD4CZ8A011ST7100 | 91% | -153.02d |
| RHD4CZ8A011ST7300 |  | Rings & C.Slab & Final Backfill for Single Catch Basin - (RD-A-1 /1)-Z8-A011-ST | 7d | 2026-09-07 A | 2027-05-04 | RHD4PRSHLDOSST1307, RHD4PRSHLSTAGST1307, RHD4CZ8A011ST7200 | 90% | -153.02d |
| RHD4CZ8A011ST7400 |  | Steel Cover for Single Catch Basin - (RD-A-1 /1)-Z8-A011-ST | 6d | 2027-08-02 | 2027-08-09 | RHD4PRSHLDOSST1707, RHD4CZ8A011ST7300, RHD4CZ8A011PT4300 |  | -129.02d |
| RHD4CZ8A011ST7500 |  | Finishing and Insulation works for Single Catch Basin - (RD-A-1 /1)-Z8-A011-ST | 11d | 2027-08-09 | 2027-08-22 | RHD4CZ8A011ST7400 |  | -129.02d |
|  | 6409 | **RHD4-02-002-A011-(ST)-Double Catch Basin Works** |  | 2027-04-19 | 2027-05-01 |  |  |  |
| RHD4CZ8A011ST8100 |  | Excavation works for Double Catch Basin - (RD-A-1 /1)-Z8-A011-ST | 2d | 2027-04-19 | 2027-04-21 | RHD4CZ8A011RD1100, RHD4CZ8A011ST7100 |  | -124.02d |
| RHD4CZ8A011ST8200 |  | PC Blinding, Installation and Pipe connection for Double Catch Basin - (RD-A-1 /1)-Z8-A011-ST | 2d | 2027-04-21 | 2027-04-24 | RHD4CZ8A011ST8100 |  | -124.02d |
| RHD4CZ8A011ST8300 |  | Rings & C.Slab & Final Backfillfor Double Catch Basin - (RD-A-1 /1)-Z8-A011-ST | 2d | 2027-04-24 | 2027-04-26 | RHD4CZ8A011ST8200 |  | -124.02d |
| RHD4CZ8A011ST8400 |  | Steel Cover for Double Catch Basin - (RD-A-1 /1)-Z8-A011-ST | 2d | 2027-04-26 | 2027-04-28 | RHD4CZ8A011ST8300 |  | -124.02d |
| RHD4CZ8A011ST8500 |  | Finishing and Insulation works for Double Catch Basin - (RD-A-1 /1)-Z8-A011-ST | 2d | 2027-04-28 | 2027-05-01 | RHD4CZ8A011ST8400 |  | -124.02d |
|  | 7378 | **RHD4-02-002-Z8-A011-Sewage Network - SW** |  | 2026-08-11 | 2027-07-26 |  |  |  |
|  | 1895 | **RHD4-02-002-A011-(SW)-GRP Pipes - 500 mm diameter** |  | 2026-08-15 | 2027-06-09 |  |  |  |
| RHD4CZ8A011SW1102 |  | Excavation works for GRP Pipe Line 500 mm - (RD-A-1 /1)-Z8-A011-SW | 2d | 2026-08-15 A | 2026-08-17 A | RHD4CZ9L02SW3100, RHD4CZ8A011RD1100, RHD4CZ8A011ST2500 | 100% |  |
| RHD4CZ8A011SW1202 |  | Bedding works for GRP Pipe Line 500 mm - (RD-A-1 /1)-Z8-A011-SW | 2d | 2026-08-16 A | 2026-08-18 A | RHD4CZ8A011SW1102 | 100% |  |
| RHD4CZ8A011SW1302 |  | Installing for GRP Pipe Line 500 mm - (RD-A-1 /1)-Z8-A011-SW | 2d | 2026-09-06 A | 2026-09-07 A | RHD4CZ8A011SW1202 | 100% |  |
| RHD4CZ8A011SW1402 |  | Primary Test for GRP Pipe Line 500 mm - (RD-A-1 /1)-Z8-A011-SW | 2d | 2027-06-05 | 2027-06-07 | RHD4CZ8A011SW1302 |  | -111.02d |
| RHD4CZ8A011SW1502 |  | Backfilling and warning tape works for GRP Pipe Line 500 mm - (RD-A-1 /1)-Z8-A011-SW | 2d | 2027-06-07 | 2027-06-09 | RHD4CZ8A011SW1402 |  | -111.02d |
|  | 4542 | **RHD4-02-002-A011-(SW)-GRP Pipes - 400 mm diameter** |  | 2026-08-15 | 2027-07-04 |  |  |  |
| RHD4CZ8A011SW1101 |  | Excavation works for GRP Pipe Line 400 mm - (RD-A-1 /1)-Z8-A011-SW | 5d | 2026-08-15 A | 2027-06-10 | RHD4CZ8A011RD1100, RHD4CZ8A011SW1102 | 49% | -141.02d |
| RHD4CZ8A011SW1201 |  | Bedding works for GRP Pipe Line 400 mm - (RD-A-1 /1)-Z8-A011-SW | 5d | 2026-09-06 A | 2027-06-16 | RHD4CZ8A011SW1101 | 49% | -127.02d |
| RHD4CZ8A011SW1301 |  | Installing for GRP Pipe Line 400 mm - (RD-A-1 /1)-Z8-A011-SW | 5d | 2026-09-08 A | 2027-06-22 | RHD4CZ8A011SW1201 | 33% | -127.02d |
| RHD4CZ8A011SW1501 |  | Backfilling and warning tape works for GRP Pipe Line 400 mm - (RD-A-1 /1)-Z8-A011-SW | 5d | 2026-09-20 A | 2027-07-04 | RHD4CZ8A011SW1401, RHD4CZ8A011SW1502 | 49% | -127.02d |
| RHD4CZ8A011SW1401 |  | Primary Test for GRP Pipe Line 400 mm - (RD-A-1 /1)-Z8-A011-SW | 5d | 2027-06-22 | 2027-06-28 | RHD4CZ8A011SW1301 |  | -127.02d |
|  | 957 | **RHD4-02-002-A011-(SW)-MH Works - 1200 mm diameter with Back drop** |  | 2026-09-05 | 2027-06-14 |  |  |  |
| RHD4CZ8A011SW3101 |  | Excavation and PC Blinding works for MH 1200 mm - (RD-A-1 /1)-Z8-A011-SW | 2d | 2026-09-05 A | 2026-09-07 A | RHD4CZ8A011RD1100, RHD4CZ8A011SW3100 | 100% |  |
| RHD4CZ8A011SW3201 |  | Installation of Base for MH 1200 mm - (RD-A-1 /1)-Z8-A011-SW | 3d | 2026-09-07 A | 2026-09-08 A | RHD4CZ8A011SW3101 | 100% |  |

| ID | WBS | Task | Duration | Start | Finish | Predecessors | Complete | Total float |
| --- | --- | --- | --- | --- | --- | --- | --- | --- |
| RHD4CZ8A011SW3301 |  | MH Ring and C.Slab works and Backfilling works for MH 1200 mm - (RD-A-1 /1)-Z8-A011-SW | 3d | 2026-09-08 A | 2027-06-08 | RHD4CZ8A011SW3201 | 50% | -110.02d |
| RHD4CZ8A011SW3401 |  | Steel Cover for MH 1200 mm - (RD-A-1 /1)-Z8-A011-SW | 2d | 2027-06-08 | 2027-06-10 | RHD4CZ8A011SW3301 |  | -110.02d |
| RHD4CZ8A011SW3501 |  | Finishing, Benching, Testing works for MH 1200 mm - (RD-A-1 /1)-Z8-A011-SW | 3d | 2027-06-10 | 2027-06-14 | RHD4CZ8A011SW3401, RHD4CZ8A011SW1502 |  | -110.02d |
|  | 3794 | **RHD4-02-002-A011-(SW)-MH Works - 1200 mm diameter** |  | 2026-09-06 | 2027-07-26 |  |  |  |
| RHD4CZ8A011SW3100 |  | Excavation and PC Blinding works for MH 1200 mm - (RD-A-1 /1)-Z8-A011-SW | 2d | 2026-09-06 A | 2026-09-07 A | RHD4CZ8A011RD1100, RHD4CZ8A011SW1102 | 100% |  |
| RHD4CZ8A011SW3200 |  | Installation of Base for MH 1200 mm - (RD-A-1 /1)-Z8-A011-SW | 13d | 2026-09-07 A | 2027-06-20 | RHD4CZ8A011SW3100 | 50% | -133.02d |
| RHD4CZ8A011SW3300 |  | MH Ring and C.Slab works and Backfilling works for MH 1200 mm - (RD-A-1 /1)-Z8-A011-SW | 13d | 2027-06-20 | 2027-07-05 | RHD4CZ8A011SW3200 |  | -133.02d |
| RHD4CZ8A011SW3400 |  | Steel Cover for MH 1200 mm - (RD-A-1 /1)-Z8-A011-SW | 5d | 2027-07-05 | 2027-07-11 | RHD4CZ8A011SW3300 |  | -133.02d |
| RHD4CZ8A011SW3500 |  | Finishing, Benching, Testing works for MH 1200 mm - (RD-A-1 /1)-Z8-A011-SW | 13d | 2027-07-11 | 2027-07-26 | RHD4CZ8A011SW3400, RHD4CZ8A011SW1501, RHD4CZ8A011SW3501 |  | -133.02d |
|  | 3790 | **RHD4-02-002-A011-(SW)-UPVC Pipes - 200 mm diameter** |  | 2026-08-11 | 2027-06-14 |  |  |  |
| RHD4CZ8A011SW2100 |  | Excavation works for UPVC Pipe Line 200 mm - (RD-A-1 /1)-Z8-A011-SW | 4d | 2026-08-11 A | 2026-08-15 A | RHD4CZ8A011RD1100, RHD4CZ8A011SW1101 | 100% |  |
| RHD4CZ8A011SW2200 |  | Bedding works for UPVC Pipe Line 200 mm - (RD-A-1 /1)-Z8-A011-SW | 3d | 2026-08-13 A | 2026-08-16 A | RHD4CZ8A011SW2100 | 100% |  |
| RHD4CZ8A011SW2300 |  | Installing for UPVC Pipe Line 200 mm - (RD-A-1 /1)-Z8-A011-SW | 4d | 2026-08-15 A | 2026-09-09 A | RHD4CZ8A011SW2200 | 100% |  |
| RHD4CZ8A011SW2500 |  | Backfilling and warning tape works for UPVC Pipe Line 200 mm - (RD-A-1 /1)-Z8-A011-SW | 4d | 2026-09-10 A | 2026-10-27 A | RHD4CZ8A011SW2400 | 100% |  |
| RHD4CZ8A011SW2400 |  | Primary Test for UPVC Pipe Line 200 mm - (RD-A-1 /1)-Z8-A011-SW | 3d | 2027-06-10 | 2027-06-14 | RHD4CZ8A011SW2300 |  | -120.02d |
|  | 7793 | **RHD4-02-002-Z8-A011-Potable Network - PT** |  | 2027-06-10 | 2027-08-09 |  |  |  |
|  | 7797 | **RHD4-02-002-A011-(PT)-HDPE Pipes - 400 mm diameter** |  | 2027-06-10 | 2027-07-21 |  |  |  |
| RHD4CZ8A011PT1103 |  | Excavation works for HDPE Pipline 400 mm - (RD-A-1 /1)-Z8-A011-PT | 7d | 2027-06-10 | 2027-06-19 | RHD4ENSDZ8APPPT130, RHD4ENMSPT2000, RHD4CZ8A011SW2100 |  | -141.02d |
| RHD4CZ8A011PT1203 |  | Bedding works for HDPE Pipline 400 mm - (RD-A-1 /1)-Z8-A011-PT | 7d | 2027-06-19 | 2027-06-27 | RHD4CZ8A011PT1103 |  | -141.02d |
| RHD4CZ8A011PT1303 |  | Installing for HDPE Pipline 400 mm - (RD-A-1 /1)-Z8-A011-PT | 9d | 2027-06-27 | 2027-07-07 | RHD4PRSHLDOSPT1000, RHD4PRSHLSTAGPT1000, RHD4CZ8A011PT1203 |  | -141.02d |
| RHD4CZ8A011PT1403 |  | Primary Test for HDPE Pipline 400 mm - (RD-A-1 /1)-Z8-A011-PT | 6d | 2027-07-07 | 2027-07-14 | RHD4CZ8A011PT1303 |  | -141.02d |
| RHD4CZ8A011PT1503 |  | Backfilling and warning tape works for HDPE Pipline 400 mm - (RD-A-1 /1)-Z8-A011-PT | 6d | 2027-07-14 | 2027-07-21 | RHD4CZ8A011PT1403 |  | -141.02d |
|  | 6102 | **RHD4-02-002-A011-(PT)-Air Valve Chambers** |  | 2027-07-24 | 2027-08-02 |  |  |  |
| RHD4CZ8A011PT2102 |  | Excavation and Bedding for Air Valve Chambers for Potable Water Network - (RD-A-1 /1)-Z8-A011-PT | 2d | 2027-07-24 | 2027-07-26 | RHD4CZ8A011PT2101 |  | -139.02d |
| RHD4CZ8A011PT2202 |  | PC works for Air Valve Chambers for Potable Water Network - (RD-A-1 /1)-Z8-A011-PT | 2d | 2027-07-26 | 2027-07-28 | RHD4CZ8A011PT2102 |  | -139.02d |
| RHD4CZ8A011PT2302 |  | Installation for Air Valve Chambers for Potable Water Network - (RD-A-1 /1)-Z8-A011-PT | 2d | 2027-07-28 | 2027-07-31 | RHD4CZ8A011PT2202 |  | -139.02d |
| RHD4CZ8A011PT2402 |  | Backfilling works for Air Valve Chambers for Potable Water Network - (RD-A-1 /1)-Z8-A011-PT | 2d | 2027-07-31 | 2027-08-02 | RHD4CZ8A011PT2302 |  | -139.02d |
|  | 6103 | **RHD4-02-002-A011-(PT)-Air Valves** |  | 2027-07-31 | 2027-08-04 |  |  |  |
| RHD4CZ8A011PT3103 |  | Installation for Air Valves for Potable Water Network - (RD-A-1 /1)-Z8-A011-PT | 2d | 2027-07-31 | 2027-08-02 | RHD4CZ8A011PT2302, RHD4CZ8A011PT2101 |  | -139.02d |
| RHD4CZ8A011PT3203 |  | Stem and Service box for Air Valves for Potable Water Network - (RD-A-1 /1)-Z8-A011-PT | 2d | 2027-08-02 | 2027-08-04 | RHD4CZ8A011PT3103, RHD4CZ8A011PT2402, RHD4CZ8A011SW3500 |  | -139.02d |
|  | 7801 | **RHD4-02-002-A011-(PT)-Butterfly Valves** |  | 2027-07-26 | 2027-08-02 |  |  |  |
| RHD4CZ8A011PT3101 |  | Installation for Butterfly Valves for Potable Water Network - (RD-A-1 /1)-Z8-A011-PT | 2d | 2027-07-26 | 2027-07-28 | RHD4PRSHLDOSPT1200, RHD4PRSHLSTAGPT1200, RHD4CZ8A011PT2300 SS |  | -139.02d |
| RHD4CZ8A011PT3201 |  | Stem and Service box for Butterfly Valves for Potable Water Network - (RD-A-1 /1)-Z8-A011-PT | 2d | 2027-07-31 | 2027-08-02 | RHD4PRSHLDOSPT1300, RHD4PRSHLSTAGPT1300, RHD4CZ8A011PT3101, RHD4CZ8A011PT2400 |  | -141.02d |
|  | 7802 | **RHD4-02-002-A011-(PT)-Wash out Valve Chambers** |  | 2027-07-21 | 2027-08-09 |  |  |  |
| RHD4CZ8A011PT2101 |  | Excavation and Bedding for Wash out Valve Chambers for Potable Water Network - (RD-A-1 /1)-Z8-A011-PT | 2d | 2027-07-21 | 2027-07-24 | RHD4ENSDZ8APPPT130, RHD4CZ8A011PT1503 |  | -139.02d |
| RHD4CZ8A011PT2201 |  | PC works for Wash out Valve Chambers for Potable Water Network - (RD-A-1 /1)-Z8-A011-PT | 2d | 2027-08-02 | 2027-08-04 | RHD4CZ8A011PT2101, RHD4CZ8A011PT3201 |  | -141.02d |
| RHD4CZ8A011PT2301 |  | Installation for Wash out Valve Chambers for Potable Water Network - (RD-A-1 /1)-Z8-A011-PT | 2d | 2027-08-04 | 2027-08-07 | RHD4PRSHLDOSPT1100, RHD4PRSHLDOSPT1400, RHD4PRSHLSTAGPT1100, RHD4PRSHLSTAGPT1400, RHD4CZ8A011PT2201 |  | -141.02d |
| RHD4CZ8A011PT2401 |  | Backfilling works for Wash out Valve Chambers for Potable Water Network - (RD-A-1 /1)-Z8-A011-PT | 2d | 2027-08-07 | 2027-08-09 | RHD4CZ8A011PT2301, RHD4CZ8A011PT3203, RHD4CZ8A011IRR3200 |  | -141.02d |
|  | 7803 | **RHD4-02-002-A011-(PT)-Wash out Valves** |  | 2027-07-28 | 2027-08-02 |  |  |  |
| RHD4CZ8A011PT3102 |  | Installation for Wash out Valves for Potable Water Network - (RD-A-1 /1)-Z8-A011-PT | 2d | 2027-07-28 | 2027-07-31 | RHD4PRSHLDOSPT1200, RHD4PRSHLSTAGPT1200, RHD4CZ8A011PT3101 |  | -132.02d |
| RHD4CZ8A011PT3202 |  | Stem and Service box for Wash out Valves for Potable Water Network - (RD-A-1 /1)-Z8-A011-PT | 2d | 2027-07-31 | 2027-08-02 | RHD4PRSHLDOSPT1300, RHD4PRSHLSTAGPT1300, RHD4CZ8A011PT3102 |  | -132.02d |
|  | 7806 | **RHD4-02-002-A011-(PT)-Fire Hydrant** |  | 2027-07-21 | 2027-08-08 |  |  |  |
| RHD4CZ8A011PT4100 |  | Excavation and Bedding and Pipe Installation for Fire Hydrant - (RD-A-1 /1)-Z8-A011-PT | 4d | 2027-07-21 | 2027-07-26 | RHD4ENSDZ8APPPT130, RHD4CZ8A011PT1503 |  | -140.02d |
| RHD4CZ8A011PT4200 |  | Valve Installation for Fire Hydrant - (RD-A-1 /1)-Z8-A011-PT | 3d | 2027-07-26 | 2027-07-29 | RHD4CZ8A011PT4100 |  | -140.02d |
| RHD4CZ8A011PT4300 |  | Stem for Fire Hydrant - (RD-A-1 /1)-Z8-A011-PT | 3d | 2027-07-29 | 2027-08-02 | RHD4CZ8A011PT4200 |  | -140.02d |
| RHD4CZ8A011PT4400 |  | Fire Installation for Fire Hydrant - (RD-A-1 /1)-Z8-A011-PT | 3d | 2027-08-02 | 2027-08-05 | RHD4PRSHLDOSPT1500, RHD4PRSHLSTAGPT1500, RHD4CZ8A011PT4300 |  | -140.02d |
| RHD4CZ8A011PT4500 |  | Protection Barriers for Fire Hydrant - (RD-A-1 /1)-Z8-A011-PT | 2d | 2027-08-05 | 2027-08-08 | RHD4CZ8A011PT4400 |  | -140.02d |
|  | 7800 | **RHD4-02-002-A011-(PT)-Butterfly Valve Chamber** |  | 2027-07-21 | 2027-07-31 |  |  |  |
| RHD4CZ8A011PT2100 |  | Excavation and Bedding for Butterfly Valve Chamber for Potable Water Network - (RD-A-1 /1)-Z8-A011-PT | 2d | 2027-07-21 | 2027-07-24 | RHD4ENSDZ8APPPT130, RHD4CZ8A011PT1503 |  | -141.02d |
| RHD4CZ8A011PT2200 |  | PC works for Butterfly Valve Chamber for Potable Water Network - (RD-A-1 /1)-Z8-A011-PT | 2d | 2027-07-24 | 2027-07-26 | RHD4CZ8A011PT2100 |  | -141.02d |
| RHD4CZ8A011PT2300 |  | Installation for Butterfly Valve Chamber for Potable Water Network - (RD-A-1 /1)-Z8-A011-PT | 2d | 2027-07-26 | 2027-07-28 | RHD4PRSHLDOSPT1100, RHD4PRSHLDOSPT1400, RHD4PRSHLSTAGPT1100, RHD4PRSHLSTAGPT1400, RHD4CZ8A011PT2200 |  | -141.02d |
| RHD4CZ8A011PT2400 |  | Backfilling works for Butterfly Valve Chamber for Potable Water Network - (RD-A-1 /1)-Z8-A011-PT | 2d | 2027-07-28 | 2027-07-31 | RHD4CZ8A011PT2300 |  | -141.02d |
|  | 1755 | **RHD4-02-002-Z8-A011-Irrigation Network - IRR** |  | 2027-06-19 | 2027-07-29 |  |  |  |
|  | 6107 | **RHD4-02-002-A011-(IRR)-HDPE Pipes - 160 mm diameter** |  | 2027-06-19 | 2027-06-30 |  |  |  |
| RHD4CZ8A011IRR1100 |  | Excavation works for HDPE Pipline 160 mm - (RD-A-1 /1)-Z8-A011-IRR | 2d | 2027-06-19 | 2027-06-21 | RHD4CZ8A011RD1100, RHD4CZ8A011PT1103 |  | -141.02d |
| RHD4CZ8A011IRR1200 |  | Bedding works for HDPE Pipline 160 mm - (RD-A-1 /1)-Z8-A011-IRR | 2d | 2027-06-21 | 2027-06-23 | RHD4CZ8A011IRR1100 |  | -115.02d |
| RHD4CZ8A011IRR1300 |  | Installing for HDPE Pipline 160 mm - (RD-A-1 /1)-Z8-A011-IRR | 2d | 2027-06-23 | 2027-06-26 | RHD4CZ8A011IRR1200 |  | -115.02d |
| RHD4CZ8A011IRR1400 |  | Primary Test for HDPE Pipline 160 mm - (RD-A-1 /1)-Z8-A011-IRR | 2d | 2027-06-26 | 2027-06-28 | RHD4CZ8A011IRR1300 |  | -112.02d |
| RHD4CZ8A011IRR1500 |  | Backfilling and warning tape works for HDPE Pipline 160 mm - (RD-A-1 /1)-Z8-A011-IRR | 2d | 2027-06-28 | 2027-06-30 | RHD4CZ8A011IRR1400 |  | -112.02d |
|  | 6115 | **RHD4-02-002-A011-(IRR)-Gate Valves (Direct Buried)** |  | 2027-07-07 | 2027-07-14 |  |  |  |
| RHD4CZ8A011IRR3100 |  | Installation for Direct Buried Gate Valves - (RD-A-1 /1)-Z8-A011-IRR | 3d | 2027-07-07 | 2027-07-11 | RHD4CZ8A011IRR1300 SS, RHD4CZ8A011IRR1300 FF, RHD4CZ8A011IRR1303 |  | -121.02d |
| RHD4CZ8A011IRR3200 |  | Stem and Service box for Direct Buried Gate Valves - (RD-A-1 /1)-Z8-A011-IRR | 3d | 2027-07-11 | 2027-07-14 | RHD4CZ8A011IRR3100, RHD4CZ8A011IRR1500 |  | -121.02d |
|  | 6116 | **RHD4-02-002-A011-(IRR)-Butterfly Valve Chamber** |  | 2027-06-21 | 2027-06-30 |  |  |  |
| RHD4CZ8A011IRR2100 |  | Excavation and Bedding for Butterfly Valve Chamber for Irrigation Network - (RD-A-1 /1)-Z8-A011-IRR | 2d | 2027-06-21 | 2027-06-23 | RHD4CZ8A011IRR1100 |  | -117.02d |
| RHD4CZ8A011IRR2200 |  | PC works for Butterfly Valve Chamber for Irrigation Network - (RD-A-1 /1)-Z8-A011-IRR | 2d | 2027-06-23 | 2027-06-26 | RHD4CZ8A011IRR2100 |  | -117.02d |
| RHD4CZ8A011IRR2300 |  | Installation for Butterfly Valve Chamber for Irrigation Network - (RD-A-1 /1)-Z8-A011-IRR | 2d | 2027-06-26 | 2027-06-28 | RHD4CZ8A011IRR2200 |  | -117.02d |
| RHD4CZ8A011IRR2400 |  | Backfilling works for Butterfly Valve Chamber for Irrigation Network - (RD-A-1 /1)-Z8-A011-IRR | 2d | 2027-06-28 | 2027-06-30 | RHD4CZ8A011IRR2300 |  | -117.02d |
|  | 6117 | **RHD4-02-002-A011-(IRR)-Butterfly Valves** |  | 2027-07-07 | 2027-07-12 |  |  |  |
| RHD4CZ8A011IRR3101 |  | Installation for Butterfly Valves for Irrigation Network - (RD-A-1 /1)-Z8-A011-IRR | 2d | 2027-07-07 | 2027-07-10 | RHD4CZ8A011IRR1300, RHD4CZ8A011IRR1303 |  | -125.02d |
| RHD4CZ8A011IRR3201 |  | Stem and Service box for Butterfly Valves for Irrigation Network - (RD-A-1 /1)-Z8-A011-IRR | 2d | 2027-07-10 | 2027-07-12 | RHD4CZ8A011IRR3101, RHD4CZ8A011IRR2400 |  | -125.02d |

| ID | WBS | Task | Duration | Start | Finish | Predecessors | Total float |
| --- | --- | --- | --- | --- | --- | --- | --- |
|  | 1769 | **RHD4-02-002-A011-(IRR)-Air Valve Chamber** |  | 2027-06-21 | 2027-06-30 |  |  |
| RHD4CZ8A011IRR2102 |  | Excavation and Bedding for Valve Chamber for Irrigation Network - (RD-A-1 /1)-Z8-A011-IRR | 2d | 2027-06-21 | 2027-06-23 | RHD4CZ8A011IRR1100 | -126.02d |
| RHD4CZ8A011IRR2202 |  | PC works for Valve Chamber for Irrigation Network - (RD-A-1 /1)-Z8-A011-IRR | 2d | 2027-06-23 | 2027-06-26 | RHD4CZ8A011IRR2102 | -126.02d |
| RHD4CZ8A011IRR2302 |  | Installation for Valve Chamber for Irrigation Network - (RD-A-1 /1)-Z8-A011-IRR | 2d | 2027-06-26 | 2027-06-28 | RHD4CZ8A011IRR2202 | -126.02d |
| RHD4CZ8A011IRR2402 |  | Backfilling works for Valve Chamber for Irrigation Network - (RD-A-1 /1)-Z8-A011-IRR | 2d | 2027-06-28 | 2027-06-30 | RHD4CZ8A011IRR2302 | -126.02d |
|  | 1770 | **RHD4-02-002-A011-(IRR)-Air Valves** |  | 2027-06-28 | 2027-07-03 |  |  |
| RHD4CZ8A011IRR3103 |  | Installation for Air Valves for Irrigation Network - (RD-A-1 /1)-Z8-A011-IRR | 2d | 2027-06-28 | 2027-06-30 | RHD4CZ8A011IRR2302 | -126.02d |
| RHD4CZ8A011IRR3203 |  | Stem and Service box for Air Valves for Irrigation Network - (RD-A-1 /1)-Z8-A011-IRR | 2d | 2027-06-30 | 2027-07-03 | RHD4CZ8A011IRR3103, RHD4CZ8A011IRR2402 | -126.02d |
|  | 8762 | **RHD4-02-002-A011-(IRR)-HDPE Pipes - 500 mm diameter** |  | 2027-06-21 | 2027-07-29 |  |  |
| RHD4CZ8A011IRR1107 |  | Excavation works for HDPE Pipline 500 mm - (RD-A-1 /1)-Z8-A011-IRR | 8d | 2027-06-21 | 2027-06-30 | RHD4CZ8A011RD1100, RHD4CZ8A011IRR1100 | -139.02d |
| RHD4CZ8A011IRR1207 |  | Bedding works for HDPE Pipline 500 mm - (RD-A-1 /1)-Z8-A011-IRR | 7d | 2027-06-30 | 2027-07-08 | RHD4CZ8A011IRR1107 | -139.02d |
| RHD4CZ8A011IRR1307 |  | Installing for HDPE Pipline 500 mm - (RD-A-1 /1)-Z8-A011-IRR | 8d | 2027-07-08 | 2027-07-18 | RHD4CZ8A011IRR1207 | -139.02d |
| RHD4CZ8A011IRR1407 |  | Primary Test for HDPE Pipline 500 mm - (RD-A-1 /1)-Z8-A011-IRR | 3d | 2027-07-18 | 2027-07-21 | RHD4CZ8A011IRR1307 | -139.02d |
| RHD4CZ8A011IRR1507 |  | Backfilling and warning tape works for HDPE Pipline 500 mm - (RD-A-1 /1)-Z8-A011-IRR | 7d | 2027-07-21 | 2027-07-29 | RHD4CZ8A011IRR1407 | -139.02d |
|  | 3651 | **RHD4-02-002-A011-(IRR)-HDPE Pipes - 250 mm diameter** |  | 2027-06-30 | 2027-07-12 |  |  |
| RHD4CZ8A011IRR1103 |  | Excavation works for HDPE Pipline 250 mm - (RD-A-1 /1)-Z8-A011-IRR | 2d | 2027-06-30 | 2027-07-03 | RHD4CZ8A011RD1100, RHD4CZ8A011IRR1107 | -125.02d |
| RHD4CZ8A011IRR1203 |  | Bedding works for HDPE Pipline 250 mm - (RD-A-1 /1)-Z8-A011-IRR | 2d | 2027-07-03 | 2027-07-05 | RHD4CZ8A011IRR1103 | -125.02d |
| RHD4CZ8A011IRR1303 |  | Installing for HDPE Pipline 250 mm - (RD-A-1 /1)-Z8-A011-IRR | 2d | 2027-07-05 | 2027-07-07 | RHD4CZ8A011IRR1203 | -125.02d |
| RHD4CZ8A011IRR1403 |  | Primary Test for HDPE Pipline 250 mm - (RD-A-1 /1)-Z8-A011-IRR | 2d | 2027-07-07 | 2027-07-10 | RHD4CZ8A011IRR1303 | -125.02d |
| RHD4CZ8A011IRR1503 |  | Backfilling and warning tape works for HDPE Pipline 250 mm - (RD-A-1 /1)-Z8-A011-IRR | 2d | 2027-07-10 | 2027-07-12 | RHD4CZ8A011IRR1403 | -125.02d |
|  | 7842 | **RHD4-02-002-Z8-A011-Medium Voltage Network - MV** |  | 2027-03-22 | 2027-08-15 |  |  |
|  | 7843 | **RHD4-02-002-A011-(MV)-Medium Voltage cable trench** |  | 2027-06-28 | 2027-08-01 |  |  |
| RHD4CZ8A011MV1100 |  | Excavation for Medium Voltage Trench - (RD-A-1 /1)-Z8-A011-MV | 7d | 2027-06-28 | 2027-07-06 | RHD4ENSDZ8APPMV150, RHD4CZ8A011ST1109, RHD4CZ8A011RD3100, RHD4CZ4C012MV1200 | -150.02d |
| RHD4CZ8A011MV1200 |  | Trench Backfilling for Medium Voltage Network - (RD-A-1 /1)-Z8-A011-MV | 7d | 2027-07-24 | 2027-08-01 | RHD4CZ8A011MV3200, RHD4CZ8A011MV3101 | -150.02d |
|  | 7844 | **RHD4-02-002-A011-(MV)-Medium Voltage duct banks** |  | 2027-03-22 | 2027-05-25 |  |  |
| RHD4CZ8A011MV2100 |  | Excavation of Duct Banks for Medium Voltage Network - (RD-A-1 /1)-Z8-A011-MV | 12d | 2027-03-22 | 2027-04-05 | RHD4ENSDZ8APPMV150, RHD4CZ8A011RD1100, RHD4CZ8A011RD3100 | -141.02d |
| RHD4CZ8A011MV2200 |  | Installation of Duct Banks for Medium Voltage Network - (RD-A-1 /1)-Z8-A011-MV | 18d | 2027-04-05 | 2027-04-26 | RHD4PRSHLDOSMV1000, RHD4PRSHLSTAGMV1000, RHD4CZ8A011MV2100 | -141.02d |
| RHD4CZ8A011MV2300 |  | Pouring of Duct Banks for Medium Voltage Network - (RD-A-1 /1)-Z8-A011-MV | 12d | 2027-04-26 | 2027-05-10 | RHD4CZ8A011MV2200 | -141.02d |
| RHD4CZ8A011MV2400 |  | Backfilling of Duct Banks for Medium Voltage Network - (RD-A-1 /1)-Z8-A011-MV | 9d | 2027-05-10 | 2027-05-25 | RHD4CZ8A011MV2300 | -141.02d |
|  | 7845 | **RHD4-02-002-A011-(MV)-Medium Voltage cables 3Cx 500 mm²** |  | 2027-07-06 | 2027-08-15 |  |  |
| RHD4CZ8A011MV3100 |  | Installation of Medium Voltage Cables 3Cx 500 mm² - (RD-A-1 /1)-Z8-A011-MV | 10d | 2027-07-06 | 2027-07-18 | RHD4PRSHLDOSMV1100, RHD4ENMSMV2000, RHD4ENMSMV2010, RHD4PRSHLSTAGMV1100, RHD4CZ8A011MV1100 | -150.02d |
| RHD4CZ8A011MV3200 |  | Joints Installation of Medium Voltage Cables 3Cx 500 mm² - (RD-A-1 /1)-Z8-A011-MV | 5d | 2027-07-18 | 2027-07-24 | RHD4PRSHLDOSMV1300, RHD4PRSHLSTAGMV1300, RHD4CZ8A011MV3100 | -150.02d |
| RHD4CZ8A011MV3300 |  | Testing of Medium Voltage Cables 3Cx 500 mm² - (RD-A-1 /1)-Z8-A011-MV | 10d | 2027-08-01 | 2027-08-12 | RHD4CZ8A011MV3200, RHD4CZ8A011MV1200 | -150.02d |
| RHD4CZ8A011MV3400 |  | Termination of Medium Voltage Cables 3Cx 500 mm² - (RD-A-1 /1)-Z8-A011-MV | 2d | 2027-08-12 | 2027-08-15 | RHD4CZ8A011MV3300, RHD4CZ8A011MV5400 | -150.02d |
|  | 7846 | **RHD4-02-002-A011-(MV)-Medium Voltage cables 3Cx 50 mm²** |  | 2027-07-06 | 2027-08-10 |  |  |
| RHD4CZ8A011MV3101 |  | Installation of Medium Voltage Cables 3Cx 50 mm² - (RD-A-1 /1)-Z8-A011-MV | 2d | 2027-07-06 | 2027-07-08 | RHD4PRSHLDOSMV1200, RHD4ENMSMV2000, RHD4ENMSMV2010, RHD4PRSHLSTAGMV1200, RHD4CZ8A011MV1100 | -137.02d |
| RHD4CZ8A011MV3301 |  | Testing of Medium Voltage Cables 3Cx 50 mm² - (RD-A-1 /1)-Z8-A011-MV | 2d | 2027-08-01 | 2027-08-03 | RHD4CZ8A011MV3101, RHD4CZ8A011MV1200 | -142.02d |
| RHD4CZ8A011MV3401 |  | Termination of Medium Voltage Cables 3Cx 50 mm² - (RD-A-1 /1)-Z8-A011-MV | 2d | 2027-08-08 | 2027-08-10 | RHD4CZ8A011MV3301, RHD4CZ8A011MV5400 | -146.02d |
|  | 7848 | **RHD4-02-002-A011-(MV)-Unit Substations** |  | 2027-07-24 | 2027-08-08 |  |  |
| RHD4CZ8A011MV5100 |  | Excavation for Unit Substations for Medium Voltage Network - (RD-A-1 /1)-Z8-A011-MV | 2d | 2027-07-24 | 2027-07-26 | RHD4ENSDZ8APPMV150, RHD4CZ8A011MV1200 SS | -146.02d |
| RHD4CZ8A011MV5200 |  | Concrete Base Placement for Unit Substations for Medium Voltage Network - (RD-A-1 /1)-Z8-A011-MV | 2d | 2027-07-26 | 2027-07-28 | RHD4CZ8A011MV5100 | -146.02d |
| RHD4CZ8A011MV5300 |  | Installation for Fences and doors for Medium Voltage Network - (RD-A-1 /1)-Z8-A011-MV | 5d | 2027-07-28 | 2027-08-03 | RHD4CZ8A011MV5200 | -146.02d |
| RHD4CZ8A011MV5400 |  | Installation for Unit Substations for Medium Voltage Network - (RD-A-1 /1)-Z8-A011-MV | 4d | 2027-08-03 | 2027-08-08 | RHD4PRLOLSTAGMV1601, RHD4PRLOLSTAGMV1602, RHD4CZ8A011MV5300 | -146.02d |
|  | 7849 | **RHD4-02-002-Z8-A011-Low Voltage Network - LV** |  | 2027-07-29 | 2027-09-08 |  |  |
|  | 7850 | **RHD4-02-002-A011-(LV)-Low Voltage duct banks** |  | 2027-07-29 | 2027-08-22 |  |  |
| RHD4CZ8A011LV2100 |  | Excavation of Duct Banks for Low Voltage Network - (RD-A-1 /1)-Z8-A011-LV | 5d | 2027-07-29 | 2027-08-04 | RHD4ENSDZ8APPLV160, RHD4CZ8A011IRR1507, RHD4CZ8A011RW3000, RHD4CZ8A011RD1100, RHD4CZ8A011MV2100 | -139.02d |
| RHD4CZ8A011LV2200 |  | Installation of Duct Banks for Low Voltage Network - (RD-A-1 /1)-Z8-A011-LV | 5d | 2027-08-04 | 2027-08-10 | RHD4PRSHLDOSLV1000, RHD4PRSHLSTAGLV1000, RHD4CZ8A011LV2100 | -139.02d |
| RHD4CZ8A011LV2300 |  | Pouring of Duct Banks for Low Voltage Network - (RD-A-1 /1)-Z8-A011-LV | 5d | 2027-08-10 | 2027-08-16 | RHD4CZ8A011LV2200 | -139.02d |
| RHD4CZ8A011LV2400 |  | Backfilling of Duct Banks for Low Voltage Network - (RD-A-1 /1)-Z8-A011-LV | 5d | 2027-08-16 | 2027-08-22 | RHD4CZ8A011LV2300 | -139.02d |
|  | 7851 | **RHD4-02-002-A011-(LV)-Low Voltage Drawpit** |  | 2027-08-15 | 2027-08-19 |  |  |
| RHD4CZ8A011LV5100 |  | Excavation of Drawpit size 900x900x1000mm for Low Voltage Network - (RD-A-1 /1)-Z8-A011-LV | 2d | 2027-08-15 | 2027-08-17 | RHD4ENSDZ8APPLV160, RHD4CZ8A011IRR1507, RHD4CZ8A011MV3400, RHD4CZ8A011MV3401 | -150.02d |
| RHD4CZ8A011LV5200 |  | Installation of Drawpit size 900x900x1000mm for Low Voltage Network - (RD-A-1 /1)-Z8-A011-LV | 2d | 2027-08-17 | 2027-08-19 | RHD4PRSHLDOSLV1400, RHD4PRSHLSTAGLV1400, RHD4CZ8A011LV5100 | -150.02d |
|  | 7852 | **RHD4-02-002-A011-(LV)-Low Voltage cables** |  | 2027-08-22 | 2027-09-01 |  |  |
| RHD4CZ8A011LV3100 |  | Excavation for Low Voltage Cables for Low Voltage Network - (RD-A-1 /1)-Z8-A011-LV | 3d | 2027-08-22 | 2027-08-25 | RHD4ENSDZ8APPLV160, RHD4CZ8A011LV2400, RHD4CZ8A011LV5200 | -139.02d |
| RHD4CZ8A011LV3200 |  | Cable Laying of Low Voltage Cables for Low Voltage Network - (RD-A-1 /1)-Z8-A011-LV | 2d | 2027-08-25 | 2027-08-28 | RHD4PRSHLDOSLV1100, RHD4ENMSLV2000, RHD4ENMSLV2010, RHD4PRSHLSTAGLV1100, RHD4CZ8A011LV3100 | -139.02d |
| RHD4CZ8A011LV3300 |  | Warning tape and Backfill for Low Voltage Cables for Low Voltage Network - (RD-A-1 /1)-Z8-A011-LV | 2d | 2027-08-28 | 2027-08-30 | RHD4CZ8A011LV3200 | -139.02d |
| RHD4CZ8A011LV3400 |  | Testing of Low Voltage Cables for Low Voltage Network - (RD-A-1 /1)-Z8-A011-LV | 2d | 2027-08-30 | 2027-09-01 | RHD4CZ8A011LV3300 | -139.02d |
|  | 7853 | **RHD4-02-002-A011-(LV)-Low Voltage Distribution Pillars** |  | 2027-09-01 | 2027-09-08 |  |  |
| RHD4CZ8A011LV4100 |  | Leveling for Distribution Pillars for Low Voltage Network - (RD-A-1 /1)-Z8-A011-LV | 2d | 2027-09-01 | 2027-09-04 | RHD4CZ8A011LV3300, RHD4CZ8A011LV3400 | -139.02d |
| RHD4CZ8A011LV4200 |  | Lean Concrete for Distribution Pillars for Low Voltage Network - (RD-A-1 /1)-Z8-A011-LV | 2d | 2027-09-04 | 2027-09-06 | RHD4CZ8A011LV4100 | -139.02d |
| RHD4CZ8A011LV4300 |  | Installation of Distribution Pillars for Low Voltage Network - (RD-A-1 /1)-Z8-A011-LV | 2d | 2027-09-06 | 2027-09-08 | RHD4PRSHLDOSLV1200, RHD4PRSHLDOSLV1300, RHD4PRSHLSTAGLV1200, RHD4PRSHLSTAGLV1300, RHD4CZ8A011LV4200 | -139.02d |
|  | 7854 | **RHD4-02-002-A011-(LV)-Low Voltage Distribution Pillars Earthing** |  |  |  |  |  |
|  | 7855 | **RHD4-02-002-Z8-A011-Street Lighting Network - SL** |  | 2027-09-08 | 2027-11-02 |  |  |
|  | 7856 | **RHD4-02-002-A011-(SL)-Street Lighting duct banks** |  |  |  |  |  |
|  | 7857 | **RHD4-02-002-A011-(SL)-Street Lighting Drawpit** |  | 2027-09-08 | 2027-09-13 |  |  |
| RHD4CZ8A011SL5100 |  | Excavation of Drawpit size 600x600x900mm for Street Lighting Network - (RD-A-1 /1)-Z8-A011-SL | 2d | 2027-09-08 | 2027-09-11 | RHD4ENSDZ8APPSL170, RHD4CZ8A011LV4300 | -139.02d |
| RHD4CZ8A011SL5200 |  | Installation of Drawpit size 600x600x900mm for Street Lighting Network - (RD-A-1 /1)-Z8-A011-SL | 2d | 2027-09-11 | 2027-09-13 | RHD4PRSHLDOSSL1400, RHD4PRSHLSTAGSL1400, RHD4CZ8A011SL5100 | -139.02d |
|  | 7858 | **RHD4-02-002-A011-(SL)-Street Lighting cables** |  | 2027-09-13 | 2027-10-03 |  |  |
| RHD4CZ8A011SL3100 |  | Excavation for Street Lighting Cables for Street Lighting Network - (RD-A-1 /1)-Z8-A011-SL | 5d | 2027-09-13 | 2027-09-19 | RHD4ENSDZ8APPSL170, RHD4CZ8A011SL5200 | -139.02d |
| RHD4CZ8A011SL3200 |  | Cable Laying of Street Lighting Cables for Street Lighting Network - (RD-A-1 /1)-Z8-A011-SL | 4d | 2027-09-19 | 2027-09-25 | RHD4PRSHLDOSSL1100, RHD4ENMSSL2000, RHD4ENMSSL2010, RHD4PRSHLSTAGSL1100, RHD4CZ8A011SL3100 | -139.02d |

| ID | WBS | Task | Duration | Start | Finish | Predecessors | Complete | Total float |
| --- | --- | --- | --- | --- | --- | --- | --- | --- |
| RHD4CZ8A011SL3300 |  | Warning tape and Backfill for Street Lighting Cables for Street Lighting Network - (RD-A-1 /1)-Z8-A011-SL | 4d | 2027-09-25 | 2027-09-29 | RHD4CZ8A011SL3200 |  | -139.02d |
| RHD4CZ8A011SL3400 |  | Testing of Street Lighting Cables for Street Lighting Network - (RD-A-1 /1)-Z8-A011-SL | 3d | 2027-09-29 | 2027-10-03 | RHD4CZ8A011SL3300, RHD4CZ8A011LV3400 |  | -139.02d |
|  | 7859 | **RHD4-02-002-A011-(SL)-Street Lighting Poles** |  | 2027-10-03 | 2027-10-24 |  |  |  |
| RHD4CZ8A011SL1100 |  | Excavation for RC Base for Lighting Poles for Street Lighting Network - (RD-A-1 /1)-Z8-A011-SL | 3d | 2027-10-03 | 2027-10-06 | RHD4ENSDZ8APPSL170, RHD4CZ8A011SL3400 |  | -139.02d |
| RHD4CZ8A011SL1200 |  | Installation for RC Base for Lighting Poles for Street Lighting Network - (RD-A-1 /1)-Z8-A011-SL | 3d | 2027-10-06 | 2027-10-10 | RHD4CZ8A011SL1100 |  | -139.02d |
| RHD4CZ8A011SL1300 |  | Backfill for RC Base for Lighting Poles for Street Lighting Network - (RD-A-1 /1)-Z8-A011-SL | 3d | 2027-10-10 | 2027-10-13 | RHD4CZ8A011SL1200 |  | -139.02d |
| RHD4CZ8A011SL1400 |  | Installation for Lighting Poles for Street Lighting Network - (RD-A-1 /1)-Z8-A011-SL | 4d | 2027-10-13 | 2027-10-18 | RHD4PRSHLDOSSL1200, RHD4ENMSSL2000, RHD4ENMSSL2010, RHD4PRSHLSTAGSL1200, RHD4CZ8A011SL1300 |  | -139.02d |
| RHD4CZ8A011SL1500 |  | Luminaire Installation for Lighting Poles for Street Lighting Network - (RD-A-1 /1)-Z8-A011-SL | 5d | 2027-10-18 | 2027-10-24 | RHD4PRSHLDOSSL1300, RHD4PRSHLSTAGSL1300, RHD4CZ8A011SL1400 |  | -139.02d |
|  | 7860 | **RHD4-02-002-A011-(SL)-Street Lighting Feeder Pillars** |  | 2027-10-24 | 2027-10-31 |  |  |  |
| RHD4CZ8A011SL4100 |  | Leveling for Distribution Pillars for Street Lighting Network - (RD-A-1 /1)-Z8-A011-SL | 2d | 2027-10-24 | 2027-10-26 | RHD4CZ8A011SL1500 |  | -114.02d |
| RHD4CZ8A011SL4200 |  | Lean Concrete for Distribution Pillars for Street Lighting Network - (RD-A-1 /1)-Z8-A011-SL | 2d | 2027-10-26 | 2027-10-28 | RHD4CZ8A011SL4100 |  | -114.02d |
| RHD4CZ8A011SL4300 |  | Installation of Distribution Pillars for Street Lighting Network - (RD-A-1 /1)-Z8-A011-SL | 2d | 2027-10-28 | 2027-10-31 | RHD4CZ8A011SL4200 |  | -114.02d |
|  | 7861 | **RHD4-02-002-A011-(SL)-Street Lighting Earthing System** |  | 2027-10-31 | 2027-11-02 |  |  |  |
| RHD4CZ8A011SL6100 |  | Installation of Earthing for Lighting Poles and Fedder Pillers for Street Lighting Network - (RD-A-1 /1)-Z8-A011-SL | 2d | 2027-10-31 | 2027-11-02 | RHD4ENMSER2000, RHD4ENMSER2010, RHD4CZ8A011SL4300 |  | -114.02d |
|  | 7867 | **RHD4-02-002-Z8-A011-Telecommunications Network - TC** |  | 2027-02-09 | 2027-12-11 |  |  |  |
|  | 7868 | **RHD4-02-002-A011-(TC)-Telecommunications Ducts** |  | 2027-11-02 | 2027-12-04 |  |  |  |
| RHD4CZ8A011TC2100 |  | Excavation of HDPE Ducts for Telecom Network - (RD-A-1 /1)-Z8-A011-TC | 8d | 2027-11-02 | 2027-11-11 | RHD4ENSDZ8APPTC190, RHD4CZ8A011SL6100 |  | -114.02d |
| RHD4CZ8A011TC2200 |  | Installation of HDPE Ducts for Telecom Network - (RD-A-1 /1)-Z8-A011-TC | 11d | 2027-11-11 | 2027-11-24 | RHD4PRSHLDOSTC1000, RHD4PRSHLSTAGTC1000, RHD4CZ8A011TC2100 |  | -114.02d |
| RHD4CZ8A011TC2400 |  | Backfilling of HDPE Ducts for Telecom Network - (RD-A-1 /1)-Z8-A011-TC | 8d | 2027-11-24 | 2027-12-04 | RHD4CZ8A011TC2200 |  | -114.02d |
|  | 7869 | **RHD4-02-002-A011-(TC)-Telecommunications Manholes** |  | 2027-12-04 | 2027-12-11 |  |  |  |
| RHD4CZ8A011TC5100 |  | Excavation for Manholes for Telecom Network - (RD-A-1 /1)-Z8-A011-TC | 3d | 2027-12-04 | 2027-12-07 | RHD4ENSDZ8APPTC190, RHD4CZ8A011SL6100, RHD4CZ8A011TC2400 |  | -114.02d |
| RHD4CZ8A011TC5200 |  | Installation of Manholes for Telecom Network - (RD-A-1 /1)-Z8-A011-TC | 3d | 2027-12-07 | 2027-12-11 | RHD4PRSHLDOSTC1200, RHD4PRSHLSTAGTC1200, RHD4CZ8A011TC5100 |  | -114.02d |
|  | 7870 | **RHD4-02-002-A011-(TC)-Telecomminications Road Crossings** |  | 2027-02-09 | 2027-02-27 |  |  |  |
| RHD4CZ8A011TC3100 |  | Excavation for Road Crossings for Telecom Network - (RD-A-1 /1)-Z8-A011-TC | 3d | 2027-02-09 | 2027-02-13 | RHD4ENSDZ8APPTC190, RHD4CZ7L131ST1105 |  | -183.02d |
| RHD4CZ8A011TC3200 |  | Installation of Road Crossings for Telecom Network - (RD-A-1 /1)-Z8-A011-TC | 4d | 2027-02-13 | 2027-02-17 | RHD4PRSHLDOSTC1100, RHD4PRSHLSTAGTC1100, RHD4CZ8A011TC3100 |  | -172.02d |
| RHD4CZ8A011TC3300 |  | Pouring of Road Crossings for Telecom Network - (RD-A-1 /1)-Z8-A011-TC | 4d | 2027-02-17 | 2027-02-23 | RHD4CZ8A011TC3200 |  | -172.02d |
| RHD4CZ8A011TC3400 |  | Backfilling of Road Crossings for Telecom Network - (RD-A-1 /1)-Z8-A011-TC | 3d | 2027-02-23 | 2027-02-27 | RHD4CZ8A011TC3300 |  | -172.02d |
|  | 7871 | **RHD4-02-002-Z8-A011-Information and Communication Technologies - ICT** |  | 2027-12-11 | 2028-02-03 |  |  |  |
|  | 7872 | **RHD4-02-002-A011-(ICT)-Information and Communication Technologies Ducts** |  | 2027-12-11 | 2028-01-27 |  |  |  |
| RHD4CZ8A011ICT2100 |  | Excavation of HDPE Ducts for ICT Network - (RD-A-1 /1)-Z8-A011-ICT | 12d | 2027-12-11 | 2027-12-25 | RHD4ENSDZ8APPICT200, RHD4CZ8A011TC5200 |  | -114.02d |
| RHD4CZ8A011ICT2200 |  | Installation of HDPE Ducts for ICT Network - (RD-A-1 /1)-Z8-A011-ICT | 17d | 2027-12-25 | 2028-01-13 | RHD4PRSHLDOSICT1000, RHD4PRSHLSTAGICT1000, RHD4CZ8A011ICT2100 |  | -114.02d |
| RHD4CZ8A011ICT2400 |  | Backfilling of HDPE Ducts for ICT Network - (RD-A-1 /1)-Z8-A011-ICT | 12d | 2028-01-13 | 2028-01-27 | RHD4CZ8A011ICT2200 |  | -114.02d |
|  | 7873 | **RHD4-02-002-A011-(ICT)-Information and Communication Technologies Manholes** |  | 2028-01-27 | 2028-02-03 |  |  |  |
| RHD4CZ8A011ICT5100 |  | Excavation for Manholes for ICT Network - (RD-A-1 /1)-Z8-A011-ICT | 3d | 2028-01-27 | 2028-01-31 | RHD4ENSDZ8APPICT200, RHD4CZ8A011ICT2400 |  | -114.02d |
| RHD4CZ8A011ICT5200 |  | Installation of Manholes for ICT Network - (RD-A-1 /1)-Z8-A011-ICT | 3d | 2028-01-31 | 2028-02-03 | RHD4PRSHLDOSICT1200, RHD4PRSHLSTAGICT1200, RHD4CZ8A011ICT5100 |  | -114.02d |
|  | 7874 | **RHD4-02-002-A011-(ICT)-Information and Communication Technologies Road Crossings** |  |  |  |  |  |  |
|  | 7862 | **RHD4-02-002-Z8-A011-Landscape Network - LS** |  |  |  |  |  |  |
|  | 7863 | **RHD4-02-002-A011-(LS)-Landscape Lighting cables** |  |  |  |  |  |  |
|  | 7864 | **RHD4-02-002-A011-(LS)-Landscape Feeder Pillars** |  |  |  |  |  |  |
|  | 7865 | **RHD4-02-002-A011-(LS)-Landscape Bollard Poles** |  |  |  |  |  |  |
|  | 7866 | **RHD4-02-002-A011-(LS)-Landscape Feeder Pillars Earthing** |  |  |  |  |  |  |
|  | 7875 | **RHD4-02-002-Z8-A011-Security Network - CCTV** |  | 2028-02-03 | 2028-03-08 |  |  |  |
|  | 7876 | **RHD4-02-002-A011-(CCTV)-Civil Works** |  | 2028-02-03 | 2028-02-09 |  |  |  |
| RHD4CZ8A011CCTV2100 |  | Civil Works for Security Network - (RD-A-1 /1)-Z8-A011-CCTV | 5d | 2028-02-03 | 2028-02-09 | RHD4CZ8A011ICT5200 |  | -114.02d |
|  | 7877 | **RHD4-02-002-A011-(CCTV)-CCTV Poles** |  | 2028-02-09 | 2028-02-21 |  |  |  |
| RHD4CZ8A011CCTV1100 |  | Excavation for RC Base for CCTV Poles for Security Network - (RD-A-1 /1)-Z8-A011-CCTV | 2d | 2028-02-09 | 2028-02-12 | RHD4ENSDZ8APPCCTV210, RHD4CZ8A011CCTV2100 |  | -114.02d |
| RHD4CZ8A011CCTV1200 |  | Installation for RC Base for CCTV Poles for Security Network - (RD-A-1 /1)-Z8-A011-CCTV | 2d | 2028-02-12 | 2028-02-14 | RHD4CZ8A011CCTV1100 |  | -114.02d |
| RHD4CZ8A011CCTV1300 |  | Backfill for RC Base for CCTV Poles for Security Network - (RD-A-1 /1)-Z8-A011-CCTV | 2d | 2028-02-14 | 2028-02-16 | RHD4CZ8A011CCTV1200 |  | -114.02d |
| RHD4CZ8A011CCTV1400 |  | Installation for CCTV Poles for Security Network - (RD-A-1 /1)-Z8-A011-CCTV | 2d | 2028-02-16 | 2028-02-19 | RHD4PRSHLDOSCCTV1000, RHD4PRSHLSTACCTV1000, RHD4CZ8A011CCTV1300 |  | -114.02d |
| RHD4CZ8A011CCTV1500 |  | Protection post Installation for CCTV Poles for Security Network - (RD-A-1 /1)-Z8-A011-CCTV | 2d | 2028-02-19 | 2028-02-21 | RHD4CZ8A011CCTV1400 |  | -114.02d |
|  | 7878 | **RHD4-02-002-A011-(CCTV)-Camera** |  | 2028-02-21 | 2028-02-24 |  |  |  |
| RHD4CZ8A011CCTV3100 |  | Installation for Cameras for Security Network - (RD-A-1 /1)-Z8-A011-CCTV | 2d | 2028-02-21 | 2028-02-24 | RHD4PRSHLDOSCCTV1100, RHD4PRSHLSTACCTV1100, RHD4CZ8A011CCTV1400, RHD4CZ8A011CCTV4100 |  | -111.02d |
|  | 7879 | **RHD4-02-002-A011-(CCTV)-Power and Infrastructure** |  | 2028-02-19 | 2028-02-21 |  |  |  |
| RHD4CZ8A011CCTV4100 |  | Installation of Power outlet, UPS and midspan for PTZ Camerafor Cameras for Security Network - (RD-A-1 /1)-Z8-A011-CCTV | 2d | 2028-02-19 | 2028-02-21 | RHD4PRSHLDOSCCTV1300, RHD4PRSHLSTACCTV1300, RHD4CZ8A011CCTV1400 |  | -111.02d |
|  | 7881 | **RHD4-02-002-A011-(CCTV)-CCTV Panels and Components** |  | 2028-02-24 | 2028-03-08 |  |  |  |
| RHD4CZ8A011CCTV6100 |  | Installation for CCTV Panels for Security Network - (RD-A-1 /1)-Z8-A011-CCTV | 8d | 2028-02-24 | 2028-03-08 | RHD4PRSHLDOSCCTV1200, RHD4PRSHLSTACCTV1200, RHD4PRLOLSTACCTV1001, RHD4CZ8A011CCTV3100 |  | -111.02d |
|  | 7892 | **RHD4-02-002-Z8-RA04** |  | 2026-07-22 | 2028-11-02 |  |  |  |
|  | 8071 | **RHD4-02-002-Z8-RA04-Road Works - RD** |  | 2026-07-22 | 2028-11-02 |  |  |  |
|  | 8072 | **RHD4-02-002-RA04-(RD)-Subgrade** |  | 2026-07-22 | 2026-07-28 |  |  |  |
| RHD4CZ8RA04RD1100 |  | Supply, lay and compaction subgrade compacted thickness 300 mm for Roads - (ROUND-04)-Z8-RA04-RD | 3d | 2026-07-22 A | 2026-07-28 A | RHD4ENSDZ8APPEW100, RHD4ENSDZ8APPRD220, RHD4CZ8RA04TC3400 | 100% |  |
|  | 8073 | **RHD4-02-002-RA04-(RD)-Aggregate Base Course** |  | 2027-02-23 | 2027-03-01 |  |  |  |
| RHD4CZ8RA04RD2100 |  | Supply, lay and compaction Aggregate base course compacted thickness 300 mmfor Roads - (ROUND-04)-Z8-RA04-RD | 5d | 2027-02-23 | 2027-03-01 | RHD4PRSHLDOSRD1000, RHD4PRSHLSTAGRD1000, RHD4CZ8RA04RD1100 |  | -162.04d |
|  | 8074 | **RHD4-02-002-RA04-(RD)-Bituminous base course Two Layers, including (MC1)&(RC2)** |  | 2027-03-01 | 2027-10-28 |  |  |  |
| RHD4CZ8RA04RD3100 |  | Supply, lay and Asphaltic base course including Prime Coat (MC1) for 1st Layer - (ROUND-04)-Z8-RA04-RD | 3d | 2027-03-01 | 2027-03-04 | RHD4PRSHLDOSRD1100, RHD4ENMSASPH2000, RHD4ENMSASPH2010, RHD4PRSHLSTAGRD1100, RHD4CZ8RA04RD2100 |  | -162.04d |
| RHD4CZ8RA04RD3200 |  | Supply, lay and Asphaltic base course including Tack Coat (RC2) for 2nd Layer - (ROUND-04)-Z8-RA04-RD | 3d | 2027-10-25 | 2027-10-28 | RHD4PRSHLDOSRD1100, RHD4PRSHLSTAGRD1100, RHD4CZ8RA04CCTV6100 |  | -119.02d |
|  | 8076 | **RHD4-02-002-RA04-(RD)-Precast Concrete Curb** |  | 2028-03-20 | 2028-03-25 |  |  |  |
| RHD4CZ8RA04RD5100 |  | Supply and installation Precast Concrete Kerb for Roads - (ROUND-04)-Z8-RA04-RD | 4d | 2028-03-20 | 2028-03-25 | RHD4PRSHLDOSRD1200, RHD4ENMSRD2000, RHD4ENMSRD2010, RHD4PRSHLSTAGRD1200, RHD4CZ8RA04RD3200, RHD4CZ8A011RD5100, RHD4CZ4L014RD7100 |  | -109.02d |
|  | 8079 | **RHD4-02-002-RA04-(RD)-Traffic Signage** |  | 2028-03-25 | 2028-04-03 |  |  |  |
| RHD4CZ8RA04RD8100 |  | Installation of Traffic Signage for Road Network - (ROUND-04)-Z8-RA04-RD | 8d | 2028-03-25 | 2028-04-03 | RHD4PRSHLDOSRD1600, RHD4PRSHLSTAGRD1600, RHD4CZ8RA04RD5100 |  | -109.02d |
|  | 8077 | **RHD4-02-002-RA04-(RD)-Precast Interlocking Block Pavers** |  |  |  |  |  |  |

| ID | WBS | Task | Duration | Start | Finish | Predecessors | Total float |
| --- | --- | --- | --- | --- | --- | --- | --- |
|  | 8075 | **RHD4-02-002-RA04-(RD)-Bituminous concrete wearing course including tack coat (RC2)** |  | 2028-03-25 | 2028-03-27 |  |  |
| RHD4CZ8RA04RD4100 |  | Supply, lay and compaction Asphaltic wearing course including tack Coat (RC2)for Road Network - (ROUND-04)-Z8-RA04-RD | 2d | 2028-03-25 | 2028-03-27 | RHD4CZ8RA04RD5100 | -109.02d |
|  | 8080 | **RHD4-02-002-RA04-(RD)-Speed Table and Wheel Stopper** |  | 2028-03-27 | 2028-04-09 |  |  |
| RHD4CZ8RA04RD9100 |  | Installation for Speed Bump for Road Network - (ROUND-04)-Z8-RA04-RD | 11d | 2028-03-27 | 2028-04-09 | RHD4CZ8RA04RD4100 | -109.02d |
|  | 8078 | **RHD4-02-002-RA04-(RD)-Pavement Marking** |  | 2028-10-30 | 2028-11-02 |  |  |
| RHD4CZ8RA04RD7100 |  | Pavement Markings for Road Network - (ROUND-04)-Z8-RA04-RD | 4d | 2028-10-30 | 2028-11-02 | RHD4PRSHLDOSRD1500, RHD4PRSHLSTAGRD1500, RHD4HOASZ1SUBTC190, RHD4HOASZ7SUBTC190, RHD4HOASZ8SUBTC190, RHD4HOASZ9SUBTC190, RHD4CZ8RA04RD4100, RHD4CZ8RA04RD9100 | -180d |
|  | 7896 | **RHD4-02-002-Z8-RA04-Storm Network - ST** |  |  |  |  |  |
|  | 7914 | **RHD4-02-002-RA04-(ST)-MH Works - 1500 mm diameter** |  |  |  |  |  |
|  | 7913 | **RHD4-02-002-RA04-(ST)-MH Works - 1200 mm diameter** |  |  |  |  |  |
|  | 7901 | **RHD4-02-002-RA04-(ST)-GRP Pipes - 800 mm diameter** |  |  |  |  |  |
|  | 7899 | **RHD4-02-002-RA04-(ST)-GRP Pipes - 600 mm diameter** |  |  |  |  |  |
|  | 7912 | **RHD4-02-002-RA04-(ST)-UPVC Pipes - 400 mm diameter** |  |  |  |  |  |
|  | 7911 | **RHD4-02-002-RA04-(ST)-UPVC Pipes - 300 mm diameter** |  |  |  |  |  |
|  | 7919 | **RHD4-02-002-RA04-(ST)-Concrete Encasement** |  |  |  |  |  |
|  | 7920 | **RHD4-02-002-Z8-RA04-Catch Basin - ST** |  |  |  |  |  |
|  | 7921 | **RHD4-02-002-RA04-(ST)-Single Catch Basin Works** |  |  |  |  |  |
|  | 7922 | **RHD4-02-002-RA04-(ST)-Double Catch Basin Works** |  |  |  |  |  |
|  | 8031 | **RHD4-02-002-Z8-RA04-Medium Voltage Network - MV** |  | 2027-06-28 | 2027-07-22 |  |  |
|  | 8034 | **RHD4-02-002-RA04-(MV)-Medium Voltage cables 3Cx 500 mm²** |  | 2027-06-28 | 2027-06-30 |  |  |
| RHD4CZ8RA04MV3400 |  | Termination of Medium Voltage Cables 3Cx 500 mm² - (ROUND-04)-Z8-RA04-MV | 2d | 2027-06-28 | 2027-06-30 | RHD4CZ8RA04RD3100, RHD4CZ4C012MV1200 | -146.02d |
|  | 8035 | **RHD4-02-002-RA04-(MV)-Medium Voltage cables 3Cx 50 mm²** |  | 2027-06-30 | 2027-07-07 |  |  |
| RHD4CZ8RA04MV3101 |  | Installation of Medium Voltage Cables 3Cx 50 mm² - (ROUND-04)-Z8-RA04-MV | 2d | 2027-06-30 | 2027-07-03 | RHD4PRSHLDOSMV1200, RHD4ENMSMV2000, RHD4ENMSMV2010, RHD4PRSHLSTAGMV1200, RHD4CZ8RA04MV3400 | -146.02d |
| RHD4CZ8RA04MV3301 |  | Testing of Medium Voltage Cables 3Cx 50 mm² - (ROUND-04)-Z8-RA04-MV | 2d | 2027-07-03 | 2027-07-05 | RHD4CZ8RA04MV3101 | -146.02d |
| RHD4CZ8RA04MV3401 |  | Termination of Medium Voltage Cables 3Cx 50 mm² - (ROUND-04)-Z8-RA04-MV | 2d | 2027-07-05 | 2027-07-07 | RHD4CZ8RA04MV3301 | -146.02d |
|  | 8037 | **RHD4-02-002-RA04-(MV)-Unit Substations** |  | 2027-07-07 | 2027-07-22 |  |  |
| RHD4CZ8RA04MV5100 |  | Excavation for Unit Substations for Medium Voltage Network - (ROUND-04)-Z8-RA04-MV | 2d | 2027-07-07 | 2027-07-10 | RHD4ENSDZ8APPMV150, RHD4CZ8RA04MV3401 | -146.02d |
| RHD4CZ8RA04MV5200 |  | Concrete Base Placement for Unit Substations for Medium Voltage Network - (ROUND-04)-Z8-RA04-MV | 2d | 2027-07-10 | 2027-07-12 | RHD4CZ8RA04MV5100 | -146.02d |
| RHD4CZ8RA04MV5300 |  | Installation for Fences and doors for Medium Voltage Network - (ROUND-04)-Z8-RA04-MV | 5d | 2027-07-12 | 2027-07-18 | RHD4CZ8RA04MV5200 | -146.02d |
| RHD4CZ8RA04MV5400 |  | Installation for Unit Substations for Medium Voltage Network - (ROUND-04)-Z8-RA04-MV | 4d | 2027-07-18 | 2027-07-22 | RHD4PRLOLSTAGMV1601, RHD4PRLOLSTAGMV1602, RHD4CZ8RA04MV5300 | -146.02d |
|  | 8038 | **RHD4-02-002-Z8-RA04-Low Voltage Network - LV** |  | 2027-07-22 | 2027-08-08 |  |  |
|  | 8039 | **RHD4-02-002-RA04-(LV)-Low Voltage duct banks** |  |  |  |  |  |
|  | 8040 | **RHD4-02-002-RA04-(LV)-Low Voltage Drawpit** |  |  |  |  |  |
|  | 8041 | **RHD4-02-002-RA04-(LV)-Low Voltage cables** |  | 2027-07-22 | 2027-08-01 |  |  |
| RHD4CZ8RA04LV3100 |  | Excavation for Low Voltage Cables for Low Voltage Network - (ROUND-04)-Z8-RA04-LV | 2d | 2027-07-22 | 2027-07-25 | RHD4ENSDZ8APPLV160, RHD4CZ8RA04MV5400 | -146.02d |
| RHD4CZ8RA04LV3200 |  | Cable Laying of Low Voltage Cables for Low Voltage Network - (ROUND-04)-Z8-RA04-LV | 2d | 2027-07-25 | 2027-07-27 | RHD4PRSHLDOSLV1100, RHD4ENMSLV2000, RHD4ENMSLV2010, RHD4PRSHLSTAGLV1100, RHD4CZ8RA04LV3100 | -146.02d |
| RHD4CZ8RA04LV3300 |  | Warning tape and Backfill for Low Voltage Cables for Low Voltage Network - (ROUND-04)-Z8-RA04-LV | 2d | 2027-07-27 | 2027-07-29 | RHD4CZ8RA04LV3200 | -146.02d |
| RHD4CZ8RA04LV3400 |  | Testing of Low Voltage Cables for Low Voltage Network - (ROUND-04)-Z8-RA04-LV | 2d | 2027-07-29 | 2027-08-01 | RHD4CZ8RA04LV3300 | -146.02d |
|  | 8042 | **RHD4-02-002-RA04-(LV)-Low Voltage Distribution Pillars** |  | 2027-08-01 | 2027-08-08 |  |  |
| RHD4CZ8RA04LV4100 |  | Leveling for Distribution Pillars for Low Voltage Network - (ROUND-04)-Z8-RA04-LV | 2d | 2027-08-01 | 2027-08-03 | RHD4CZ8RA04LV3400 | -146.02d |
| RHD4CZ8RA04LV4200 |  | Lean Concrete for Distribution Pillars for Low Voltage Network - (ROUND-04)-Z8-RA04-LV | 2d | 2027-08-03 | 2027-08-05 | RHD4CZ8RA04LV4100 | -146.02d |
| RHD4CZ8RA04LV4300 |  | Installation of Distribution Pillars for Low Voltage Network - (ROUND-04)-Z8-RA04-LV | 2d | 2027-08-05 | 2027-08-08 | RHD4PRSHLDOSLV1200, RHD4PRSHLDOSLV1300, RHD4PRSHLSTAGLV1200, RHD4PRSHLSTAGLV1300, RHD4CZ8RA04LV4200 | -146.02d |
|  | 8043 | **RHD4-02-002-RA04-(LV)-Low Voltage Distribution Pillars Earthing** |  |  |  |  |  |
|  | 8044 | **RHD4-02-002-Z8-RA04-Street Lighting Network - SL** |  | 2027-07-20 | 2027-09-06 |  |  |
|  | 8045 | **RHD4-02-002-RA04-(SL)-Street Lighting duct banks** |  | 2027-07-20 | 2027-08-08 |  |  |
| RHD4CZ8RA04SL2100 |  | Excavation of Duct Banks for Street Lighting Network - (ROUND-04)-Z8-RA04-SL | 4d | 2027-07-20 | 2027-07-25 | RHD4ENSDZ8APPSL170, RHD4CZ8RA04RA3000, RHD4CZ8RA04RD1100, RHD4CZ8C014SL2400 | -140.02d |
| RHD4CZ8RA04SL2200 |  | Installation of Duct Banks for Street Lighting Network - (ROUND-04)-Z8-RA04-SL | 5d | 2027-07-25 | 2027-07-31 | RHD4PRSHLDOSSL1000, RHD4PRSHLSTAGSL1000, RHD4CZ8RA04SL2100 | -140.02d |
| RHD4CZ8RA04SL2300 |  | Pouring of Duct Banks for Street Lighting Network - (ROUND-04)-Z8-RA04-SL | 4d | 2027-07-31 | 2027-08-04 | RHD4CZ8RA04SL2200 | -140.02d |
| RHD4CZ8RA04SL2400 |  | Backfilling of Duct Banks for Street Lighting Network - (ROUND-04)-Z8-RA04-SL | 3d | 2027-08-04 | 2027-08-08 | RHD4CZ8RA04SL2300 | -140.02d |
|  | 8046 | **RHD4-02-002-RA04-(SL)-Street Lighting Drawpit** |  | 2027-08-08 | 2027-08-12 |  |  |
| RHD4CZ8RA04SL5100 |  | Excavation of Drawpit size 600x600x900mm for Street Lighting Network - (ROUND-04)-Z8-RA04-SL | 2d | 2027-08-08 | 2027-08-10 | RHD4ENSDZ8APPSL170, RHD4CZ8RA04LV4300 | -146.02d |
| RHD4CZ8RA04SL5200 |  | Installation of Drawpit size 600x600x900mm for Street Lighting Network - (ROUND-04)-Z8-RA04-SL | 2d | 2027-08-10 | 2027-08-12 | RHD4PRSHLDOSSL1400, RHD4PRSHLSTAGSL1400, RHD4CZ8RA04SL5100 | -146.02d |
|  | 8047 | **RHD4-02-002-RA04-(SL)-Street Lighting cables** |  | 2027-08-12 | 2027-08-25 |  |  |
| RHD4CZ8RA04SL3100 |  | Excavation for Street Lighting Cables for Street Lighting Network - (ROUND-04)-Z8-RA04-SL | 3d | 2027-08-12 | 2027-08-16 | RHD4ENSDZ8APPSL170, RHD4CZ8RA04SL5200 | -146.02d |
| RHD4CZ8RA04SL3200 |  | Cable Laying of Street Lighting Cables for Street Lighting Network - (ROUND-04)-Z8-RA04-SL | 3d | 2027-08-16 | 2027-08-19 | RHD4PRSHLDOSSL1100, RHD4ENMSSL2000, RHD4ENMSSL2010, RHD4PRSHLSTAGSL1100, RHD4CZ8RA04SL3100 | -146.02d |
| RHD4CZ8RA04SL3300 |  | Warning tape and Backfill for Street Lighting Cables for Street Lighting Network - (ROUND-04)-Z8-RA04-SL | 3d | 2027-08-19 | 2027-08-23 | RHD4CZ8RA04SL3200 | -146.02d |
| RHD4CZ8RA04SL3400 |  | Testing of Street Lighting Cables for Street Lighting Network - (ROUND-04)-Z8-RA04-SL | 2d | 2027-08-23 | 2027-08-25 | RHD4CZ8RA04SL3300 | -146.02d |
|  | 8048 | **RHD4-02-002-RA04-(SL)-Street Lighting Poles** |  | 2027-08-25 | 2027-09-06 |  |  |
| RHD4CZ8RA04SL1100 |  | Excavation for RC Base for Lighting Poles for Street Lighting Network - (ROUND-04)-Z8-RA04-SL | 2d | 2027-08-25 | 2027-08-28 | RHD4ENSDZ8APPSL170, RHD4CZ8RA04SL3400 | -146.02d |
| RHD4CZ8RA04SL1200 |  | Installation for RC Base for Lighting Poles for Street Lighting Network - (ROUND-04)-Z8-RA04-SL | 2d | 2027-08-28 | 2027-08-30 | RHD4CZ8RA04SL1100 | -146.02d |
| RHD4CZ8RA04SL1300 |  | Backfill for RC Base for Lighting Poles for Street Lighting Network - (ROUND-04)-Z8-RA04-SL | 2d | 2027-08-30 | 2027-09-01 | RHD4CZ8RA04SL1200 | -146.02d |
| RHD4CZ8RA04SL1400 |  | Installation for Lighting Poles for Street Lighting Network - (ROUND-04)-Z8-RA04-SL | 2d | 2027-09-01 | 2027-09-04 | RHD4PRSHLDOSSL1200, RHD4ENMSSL2000, RHD4ENMSSL2010, RHD4PRSHLSTAGSL1200, RHD4CZ8RA04SL1300 | -146.02d |
| RHD4CZ8RA04SL1500 |  | Luminaire Installation for Lighting Poles for Street Lighting Network - (ROUND-04)-Z8-RA04-SL | 2d | 2027-09-04 | 2027-09-06 | RHD4PRSHLDOSSL1300, RHD4PRSHLSTAGSL1300, RHD4CZ8RA04SL1400 | -146.02d |
|  | 489 | **RHD4-02-002-Z8-RA04-Telecommunications Network - TC** |  | 2027-02-13 | 2027-10-07 |  |  |
|  | 490 | **RHD4-02-002-C081-(TC)-Telecommunications Ducts** |  | 2027-09-06 | 2027-10-07 |  |  |
| RHD4CZ8RA04TC2100 |  | Excavation of HDPE Ducts for Telecom Network - (ROUND-04)-Z8-RA04-TC | 10d | 2027-09-06 | 2027-09-18 | RHD4CZ8RA04SL1500 | -145.02d |
| RHD4CZ8RA04TC2200 |  | Installation of HDPE Ducts for Telecom Network - (ROUND-04)-Z8-RA04-TC | 8.01d | 2027-09-18 | 2027-09-28 | RHD4CZ8RA04TC2100 | -141.02d |
| RHD4CZ8RA04TC2400 |  | Backfilling of HDPE Ducts for Telecom Network - (ROUND-04)-Z8-RA04-TC | 8.01d | 2027-09-28 | 2027-10-07 | RHD4CZ8RA04TC2200, RHD4CZ8RA04TC5200 | -139.03d |
|  | 491 | **RHD4-02-002-C081-(TC)-Telecommunications Manholes** |  | 2027-09-18 | 2027-09-28 |  |  |
| RHD4CZ8RA04TC5100 |  | Excavation for Manholes for Telecom Network - (ROUND-04)-Z8-RA04-TC | 4d | 2027-09-18 | 2027-09-22 | RHD4CZ8RA04TC2100, RHD4CZ8RA04TC2100 FF | -145.02d |
| RHD4CZ8RA04TC5200 |  | Installation of Manholes for Telecom Network - (ROUND-04)-Z8-RA04-TC | 4d | 2027-09-22 | 2027-09-28 | RHD4CZ8RA04TC5100, RHD4CZ8RA04TC2200 SS | -145.02d |

| ID | WBS | Task | Duration | Start | Finish | Predecessors | Complete | Total float |
| --- | --- | --- | --- | --- | --- | --- | --- | --- |
|  | 5411 | **RHD4-02-002-C081-(TC)-Telecomminications Road Crossings** |  | 2027-02-13 | 2027-02-23 |  |  |  |
| RHD4CZ8RA04TC3100 |  | Excavation for Road Crossings for Telecom Network - (ROUND-04)-Z8-RA04-TC | 2d | 2027-02-13 | 2027-02-15 | RHD4CZ8A011TC3100 |  | -183.02d |
| RHD4CZ8RA04TC3200 |  | Installation of Road Crossings for Telecom Network - (ROUND-04)-Z8-RA04-TC | 2.01d | 2027-02-15 | 2027-02-17 | RHD4CZ8RA04TC3100 |  | -162.04d |
| RHD4CZ8RA04TC3300 |  | Pouring of Road Crossings for Telecom Network - (ROUND-04)-Z8-RA04-TC | 2.01d | 2027-02-17 | 2027-02-20 | RHD4CZ8RA04TC3200 |  | -162.04d |
| RHD4CZ8RA04TC3400 |  | Backfilling of Road Crossings for Telecom Network - (ROUND-04)-Z8-RA04-TC | 2d | 2027-02-20 | 2027-02-23 | RHD4CZ8RA04TC3300 |  | -162.04d |
|  | 8060 | **RHD4-02-002-Z8-RA04-Information and Communication Technologies - ICT** |  | 2027-09-06 | 2027-09-22 |  |  |  |
|  | 8061 | **RHD4-02-002-RA04-(ICT)-Information and Communication Technologies Ducts** |  | 2027-09-06 | 2027-09-22 |  |  |  |
| RHD4CZ8RA04ICT2100 |  | Excavation of HDPE Ducts for ICT Network - (ROUND-04)-Z8-RA04-ICT | 4d | 2027-09-06 | 2027-09-11 | RHD4ENSDZ8APPICT200, RHD4CZ8RA04SL1500 |  | -146.02d |
| RHD4CZ8RA04ICT2200 |  | Installation of HDPE Ducts for ICT Network - (ROUND-04)-Z8-RA04-ICT | 6d | 2027-09-11 | 2027-09-18 | RHD4PRSHLDOSICT1000, RHD4PRSHLSTAGICT1000, RHD4CZ8RA04ICT2100 |  | -146.02d |
| RHD4CZ8RA04ICT2400 |  | Backfilling of HDPE Ducts for ICT Network - (ROUND-04)-Z8-RA04-ICT | 4d | 2027-09-18 | 2027-09-22 | RHD4CZ8RA04ICT2200 |  | -146.02d |
|  | 8051 | **RHD4-02-002-Z8-RA04-Landscape Network - LS** |  |  |  |  |  |  |
|  | 8052 | **RHD4-02-002-RA04-(LS)-Landscape Lighting cables** |  |  |  |  |  |  |
|  | 8054 | **RHD4-02-002-RA04-(LS)-Landscape Bollard Poles** |  |  |  |  |  |  |
|  | 8064 | **RHD4-02-002-Z8-RA04-Security Network - CCTV** |  | 2027-09-22 | 2027-10-25 |  |  |  |
|  | 8065 | **RHD4-02-002-RA04-(CCTV)-Civil Works** |  | 2027-09-22 | 2027-09-29 |  |  |  |
| RHD4CZ8RA04CCTV2100 |  | Civil Works for Security Network - (ROUND-04)-Z8-RA04-CCTV | 5d | 2027-09-22 | 2027-09-29 | RHD4CZ8RA04ICT2400 |  | -146.02d |
|  | 8066 | **RHD4-02-002-RA04-(CCTV)-CCTV Poles** |  | 2027-09-29 | 2027-10-11 |  |  |  |
| RHD4CZ8RA04CCTV1100 |  | Excavation for RC Base for CCTV Poles for Security Network - (ROUND-04)-Z8-RA04-CCTV | 2d | 2027-09-29 | 2027-10-02 | RHD4ENSDZ8APPCCTV210, RHD4CZ8RA04TC5200, RHD4CZ8RA04CCTV2100 |  | -146.02d |
| RHD4CZ8RA04CCTV1200 |  | Installation for RC Base for CCTV Poles for Security Network - (ROUND-04)-Z8-RA04-CCTV | 2d | 2027-10-02 | 2027-10-04 | RHD4CZ8RA04CCTV1100 |  | -146.02d |
| RHD4CZ8RA04CCTV1300 |  | Backfill for RC Base for CCTV Poles for Security Network - (ROUND-04)-Z8-RA04-CCTV | 2d | 2027-10-04 | 2027-10-06 | RHD4CZ8RA04CCTV1200 |  | -146.02d |
| RHD4CZ8RA04CCTV1400 |  | Installation for CCTV Poles for Security Network - (ROUND-04)-Z8-RA04-CCTV | 2d | 2027-10-06 | 2027-10-09 | RHD4PRSHLDOSCCTV1000, RHD4PRSHLSTACCTV1000, RHD4CZ8RA04CCTV1300 |  | -146.02d |
| RHD4CZ8RA04CCTV1500 |  | Protection post Installation for CCTV Poles for Security Network - (ROUND-04)-Z8-RA04-CCTV | 2d | 2027-10-09 | 2027-10-11 | RHD4CZ8RA04CCTV1400 |  | -146.02d |
|  | 8067 | **RHD4-02-002-RA04-(CCTV)-Camera** |  | 2027-10-11 | 2027-10-13 |  |  |  |
| RHD4CZ8RA04CCTV3100 |  | Installation for Cameras for Security Network - (ROUND-04)-Z8-RA04-CCTV | 2d | 2027-10-11 | 2027-10-13 | RHD4PRSHLDOSCCTV1100, RHD4PRSHLSTACCTV1100, RHD4CZ8RA04CCTV1500 |  | -146.02d |
|  | 8068 | **RHD4-02-002-RA04-(CCTV)-Power and Infrastructure** |  | 2027-10-13 | 2027-10-16 |  |  |  |
| RHD4CZ8RA04CCTV4100 |  | Installation of Power outlet, UPS and midspan for PTZ Camerafor Cameras for Security Network - (ROUND-04)-Z8-RA04-CCTV | 2d | 2027-10-13 | 2027-10-16 | RHD4PRSHLDOSCCTV1300, RHD4PRSHLSTACCTV1300, RHD4CZ8RA04CCTV3100 |  | -146.02d |
|  | 8070 | **RHD4-02-002-RA04-(CCTV)-CCTV Panels and Components** |  | 2027-10-16 | 2027-10-25 |  |  |  |
| RHD4CZ8RA04CCTV6100 |  | Installation for CCTV Panels for Security Network - (ROUND-04)-Z8-RA04-CCTV | 8d | 2027-10-16 | 2027-10-25 | RHD4PRSHLDOSCCTV1200, RHD4PRSHLSTACCTV1200, RHD4PRLOLSTACCTV1001, RHD4CZ8RA04CCTV4100, RHD4CZ8RA04TC2400 |  | -146.02d |
|  | 7325 | **RHD4-02-002-Z8-L04** |  | 2026-08-25 | 2028-01-18 |  |  |  |
|  | 7356 | **RHD4-02-002-Z8-L04-Crossings Sewage Network - SWCr** |  |  |  |  |  |  |
|  | 7366 | **RHD4-02-002-L04-(SWCr)-MH Works - 1200 mm diameter** |  |  |  |  |  |  |
|  | 7368 | **RHD4-02-002-L04-(SWCr)-MH Works - 1500 mm diameter** |  |  |  |  |  |  |
|  | 7367 | **RHD4-02-002-L04-(SWCr)-MH Works - 1200 mm diameter with Back drop** |  |  |  |  |  |  |
|  | 7369 | **RHD4-02-002-L04-(SWCr)-MH Works - 1500 mm diameter with Back drop** |  |  |  |  |  |  |
|  | 7361 | **RHD4-02-002-L04-(SWCr)-GRP Pipes - 700 mm diameter** |  |  |  |  |  |  |
|  | 7362 | **RHD4-02-002-L04-(SWCr)-UPVC Pipes - 200 mm diameter** |  |  |  |  |  |  |
|  | 7400 | **RHD4-02-002-Z8-L04-Crossings Potable Network - PTCr** |  |  |  |  |  |  |
|  | 7402 | **RHD4-02-002-L04-(PTCr)-HDPE Pipes - 160 mm diameter** |  |  |  |  |  |  |
|  | 7401 | **RHD4-02-002-L04-(PTCr)-HDPE Pipes - 110 mm diameter** |  |  |  |  |  |  |
|  | 7406 | **RHD4-02-002-L04-(PTCr)-Gate Valves (Direct Buried)** |  |  |  |  |  |  |
|  | 7409 | **RHD4-02-002-L04-(PTCr)-Wash out Valve Chambers** |  |  |  |  |  |  |
|  | 7410 | **RHD4-02-002-L04-(PTCr)-Wash out Valves** |  |  |  |  |  |  |
|  | 7411 | **RHD4-02-002-L04-(PTCr)-Air Valve Chambers** |  |  |  |  |  |  |
|  | 7412 | **RHD4-02-002-L04-(PTCr)-Air Valves** |  |  |  |  |  |  |
|  | 7504 | **RHD4-02-002-Z8-L04-Road Works - RD** |  | 2027-02-23 | 2028-01-18 |  |  |  |
|  | 7505 | **RHD4-02-002-L04-(RD)-Subgrade** |  | 2027-02-23 | 2027-03-02 |  |  |  |
| RHD4CZ8L04RD1100 |  | Supply, lay and compaction subgrade compacted thickness 300 mm for Roads - (RD-L-04)-Z8-L04-RD | 6d | 2027-02-23 | 2027-03-02 | RHD4ENSDZ8APPEW100, RHD4ENSDZ8APPRD220, RHD4CZ8L04ICT3400 |  | -183.02d |
|  | 7506 | **RHD4-02-002-L04-(RD)-Aggregate Base Course** |  | 2027-03-02 | 2027-03-08 |  |  |  |
| RHD4CZ8L04RD2100 |  | Supply, lay and compaction Aggregate base course compacted thickness 300 mmfor Roads - (RD-L-04)-Z8-L04-RD | 5d | 2027-03-02 | 2027-03-08 | RHD4PRSHLDOSRD1000, RHD4PRSHLSTAGRD1000, RHD4CZ8L04RD1100 |  | -183.02d |
|  | 7507 | **RHD4-02-002-L04-(RD)-Bituminous base course Two Layers, including (MC1)&(RC2)** |  | 2027-03-08 | 2027-12-15 |  |  |  |
| RHD4CZ8L04RD3100 |  | Supply, lay and Asphaltic base course including Prime Coat (MC1) for 1st Layer - (RD-L-04)-Z8-L04-RD | 2d | 2027-03-08 | 2027-03-14 | RHD4PRSHLDOSRD1100, RHD4ENMSASPH2000, RHD4ENMSASPH2010, RHD4PRSHLSTAGRD1100, RHD4CZ8L04RD2100 |  | -183.02d |
| RHD4CZ8L04RD3200 |  | Supply, lay and Asphaltic base course including Tack Coat (RC2) for 2nd Layer - (RD-L-04)-Z8-L04-RD | 2d | 2027-12-13 | 2027-12-15 | RHD4PRSHLDOSRD1100, RHD4PRSHLSTAGRD1100, RHD4CZ8L04RD3100, RHD4CZ8L04CCTV6100, RHD4CZ8RA04RD3200 |  | -158.02d |
|  | 7509 | **RHD4-02-002-L04-(RD)-Precast Concrete Curb** |  | 2027-12-15 | 2027-12-22 |  |  |  |
| RHD4CZ8L04RD5100 |  | Supply and installation Precast Concrete Kerb for Roads - (RD-L-04)-Z8-L04-RD | 6d | 2027-12-15 | 2027-12-22 | RHD4PRSHLDOSRD1200, RHD4ENMSRD2000, RHD4ENMSRD2010, RHD4PRSHLSTAGRD1200, RHD4CZ8L04RD3200 |  | -158.02d |
|  | 7512 | **RHD4-02-002-L04-(RD)-Traffic Signage** |  | 2027-12-22 | 2027-12-29 |  |  |  |
| RHD4CZ8L04RD8100 |  | Installation of Traffic Signage for Road Network - (RD-L-04)-Z8-L04-RD | 6d | 2027-12-22 | 2027-12-29 | RHD4PRSHLDOSRD1600, RHD4PRSHLSTAGRD1600, RHD4CZ8L04RD5100, RHD4CZ5L08RD8100 |  | -158.02d |
|  | 7510 | **RHD4-02-002-L04-(RD)-Precast Interlocking Block Pavers** |  | 2027-12-29 | 2028-01-10 |  |  |  |
| RHD4CZ8L04RD6100 |  | Interlocking block pavers for sidewalk-footpath for Side walks and Parking areas - (RD-L-04)-Z8-L04-RD | 10d | 2027-12-29 | 2028-01-10 | RHD4PRSHLDOSRD1300, RHD4ENMSRD2000, RHD4ENMSRD2010, RHD4PRSHLSTAGRD1300, RHD4CZ8L04RD8100 |  | -158.02d |
|  | 7508 | **RHD4-02-002-L04-(RD)-Bituminous concrete wearing course including tack coat (RC2)** |  | 2028-01-10 | 2028-01-12 |  |  |  |
| RHD4CZ8L04RD4100 |  | Supply, lay and compaction Asphaltic wearing course including tack Coat (RC2)for Road Network - (RD-L-04)-Z8-L04-RD | 2d | 2028-01-10 | 2028-01-12 | RHD4CZ8L04RD5100, RHD4CZ8L04RD6100 |  | -158.02d |
|  | 7511 | **RHD4-02-002-L04-(RD)-Pavement Marking** |  | 2028-01-12 | 2028-01-18 |  |  |  |
| RHD4CZ8L04RD7100 |  | Pavement Markings for Road Network - (RD-L-04)-Z8-L04-RD | 5d | 2028-01-12 | 2028-01-18 | RHD4PRSHLDOSRD1500, RHD4PRSHLSTAGRD1500, RHD4CZ8L04RD4100 |  | -158.02d |
|  | 7329 | **RHD4-02-002-Z8-L04-Storm Network - ST** |  | 2026-08-25 | 2027-06-23 |  |  |  |
|  | 7348 | **RHD4-02-002-L04-(ST)-MH Works - 2000 mm diameter** |  | 2026-09-19 | 2027-04-28 |  |  |  |
| RHD4CZ8L04ST3102 |  | Excavation and PC Blinding works for MH 2000 mm - (RD-L-04)-Z8-L04-ST | 2d | 2026-09-19 A | 2026-09-20 A | RHD4ENSDZ8APPST110, RHD4ENMSST2000, RHD4CZ8A011ST3101, RHD4CZ8L04ST2100 | 100% |  |
| RHD4CZ8L04ST3202 |  | Installation of Base for MH 2000 mm - (RD-L-04)-Z8-L04-ST | 2d | 2027-04-19 | 2027-04-21 | RHD4PRSHLSTAGST1607, RHD4CZ8L04ST3102 |  | -110.02d |
| RHD4CZ8L04ST3302 |  | MH Ring and C.Slab works and Backfilling works for MH 2000 mm - (RD-L-04)-Z8-L04-ST | 2d | 2027-04-21 | 2027-04-24 | RHD4PRSHLDOSST1607, RHD4CZ8L04ST3202 |  | -110.02d |
| RHD4CZ8L04ST3402 |  | Steel Cover for MH 2000 mm - (RD-L-04)-Z8-L04-ST | 2d | 2027-04-24 | 2027-04-26 | RHD4PRSHLDOSST1707, RHD4PRSHLSTAGST1707, RHD4CZ8L04ST3302 |  | -110.02d |
| RHD4CZ8L04ST3502 |  | Finishing, Benching, Testing works for MH 2000 mm - (RD-L-04)-Z8-L04-ST | 2d | 2027-04-26 | 2027-04-28 | RHD4CZ8L04ST3402 |  | -110.02d |
|  | 1844 | **RHD4-02-002-L04-(ST)-GRP Pipes - 400 mm diameter** |  | 2026-09-15 | 2027-03-25 |  |  |  |

| ID | WBS | Task | Duration | Start | Finish | Predecessors | Complete | Total float |
| --- | --- | --- | --- | --- | --- | --- | --- | --- |
| RHD4CZ8L04ST1100 |  | Excavation works for GRP Pipe Line 400 mm - (RD-L-04)-Z8-L04-ST | 2d | 2026-09-15 A | 2026-09-16 A | RHD4CZ8L04ST1508, RHD4CZ8L04ST1101 | 100% |  |
| RHD4CZ8L04ST1200 |  | Bedding works for GRP Pipe Line 400 mm - (RD-L-04)-Z8-L04-ST | 2d | 2026-09-19 A | 2026-09-20 A | RHD4CZ8L04ST1100 | 100% |  |
| RHD4CZ8L04ST1300 |  | Installing for GRP Pipe Line 400 mm - (RD-L-04)-Z8-L04-ST | 2d | 2026-09-20 A | 2026-09-21 A | RHD4CZ8L04ST1200 | 100% |  |
| RHD4CZ8L04ST1500 |  | Backfilling and warning tape works for GRP Pipe Line 400 mm - (RD-L-04)-Z8-L04-ST | 2d | 2026-10-24 A | 2026-10-25 A | RHD4CZ8L04ST1400 | 100% |  |
| RHD4CZ8L04ST1400 |  | Primary Test for GRP Pipe Line 400 mm - (RD-L-04)-Z8-L04-ST | 2d | 2027-03-23 | 2027-03-25 | RHD4CZ8L04ST1300 |  | -119.02d |
|  | 1852 | **RHD4-02-002-L04-(ST)-GRP Pipes - 1200 mm diameter** |  | 2026-08-25 | 2027-03-23 |  |  |  |
| RHD4CZ8L04ST1108 |  | Excavation works for GRP Pipe Line 1200 mm - (RD-L-04)-Z8-L04-ST | 2d | 2026-08-25 A | 2027-03-14 | RHD4CZ8L04RW3000, RHD4CZ6A015IRR1100 | 50% | -125.02d |
| RHD4CZ8L04ST1208 |  | Bedding works for GRP Pipe Line 1200 mm - (RD-L-04)-Z8-L04-ST | 2d | 2026-10-17 A | 2027-03-16 | RHD4CZ8L04ST1108 | 40% | -119.02d |
| RHD4CZ8L04ST1308 |  | Installing for GRP Pipe Line 1200 mm - (RD-L-04)-Z8-L04-ST | 2d | 2026-10-19 A | 2027-03-18 | RHD4CZ8L04ST1208 | 40% | -119.02d |
| RHD4CZ8L04ST1408 |  | Primary Test for GRP Pipe Line 1200 mm - (RD-L-04)-Z8-L04-ST | 2d | 2027-03-18 | 2027-03-21 | RHD4CZ8L04ST1308 |  | -119.02d |
| RHD4CZ8L04ST1508 |  | Backfilling and warning tape works for GRP Pipe Line 1200 mm - (RD-L-04)-Z8-L04-ST | 2d | 2027-03-21 | 2027-03-23 | RHD4CZ8L04ST1408 |  | -119.02d |
|  | 2414 | **RHD4-02-002-L04-(ST)-GRP Pipes - 600 mm diameter** |  | 2026-09-15 | 2027-04-01 |  |  |  |
| RHD4CZ8L04ST1102 |  | Excavation works for GRP Pipe Line 600 mm - (RD-L-04)-Z8-L04-ST | 2d | 2026-09-15 A | 2027-03-23 | RHD4CZ8L04ST1103 | 55% | -125.02d |
| RHD4CZ8L04ST1202 |  | Bedding works for GRP Pipe Line 600 mm - (RD-L-04)-Z8-L04-ST | 2d | 2026-09-17 A | 2027-03-25 | RHD4CZ8L04ST1102 | 65% | -110.02d |
| RHD4CZ8L04ST1302 |  | Installing for GRP Pipe Line 600 mm - (RD-L-04)-Z8-L04-ST | 2d | 2026-09-21 A | 2027-03-28 | RHD4CZ8L04ST1202 | 34% | -110.02d |
| RHD4CZ8L04ST1402 |  | Primary Test for GRP Pipe Line 600 mm - (RD-L-04)-Z8-L04-ST | 2d | 2027-03-28 | 2027-03-30 | RHD4CZ8L04ST1302 |  | -110.02d |
| RHD4CZ8L04ST1502 |  | Backfilling and warning tape works for GRP Pipe Line 600 mm - (RD-L-04)-Z8-L04-ST | 2d | 2027-03-30 | 2027-04-01 | RHD4CZ8L04ST1402 |  | -110.02d |
|  | 3752 | **RHD4-02-002-L04-(ST)-MH Works - 1200 mm diameter** |  | 2026-09-19 | 2027-06-12 |  |  |  |
| RHD4CZ8L04ST3100 |  | Excavation and PC Blinding works for MH 1200 mm - (RD-L-04)-Z8-L04-ST | 4d | 2026-09-19 A | 2026-09-22 A | RHD4CZ8L04ST1500, RHD4CZ8L04ST1102, RHD4CZ8L04ST3101 | 100% |  |
| RHD4CZ8L04ST3200 |  | Installation of Base for MH 1200 mm - (RD-L-04)-Z8-L04-ST | 4d | 2027-05-24 | 2027-05-29 | RHD4CZ8L04ST3100, RHD4CZ4L09ST3501, RHD4CZ5L07PT4500 |  | -166.02d |
| RHD4CZ8L04ST3300 |  | MH Ring and C.Slab works and Backfilling works for MH 1200 mm - (RD-L-04)-Z8-L04-ST | 4d | 2027-05-29 | 2027-06-02 | RHD4CZ8L04ST3200, RHD4CSWL1B07D021004, RHD4CZ6C062SW3500 |  | -166.02d |
| RHD4CZ8L04ST3400 |  | Steel Cover for MH 1200 mm - (RD-L-04)-Z8-L04-ST | 4d | 2027-06-02 | 2027-06-07 | RHD4CZ8L04ST3300 |  | -134.02d |
| RHD4CZ8L04ST3500 |  | Finishing, Benching, Testing works for MH 1200 mm - (RD-L-04)-Z8-L04-ST | 4d | 2027-06-07 | 2027-06-12 | RHD4CZ8L04ST3400 |  | -134.02d |
|  | 3739 | **RHD4-02-002-L04-(ST)-GRP Pipes - 700 mm diameter** |  | 2026-09-15 | 2027-03-30 |  |  |  |
| RHD4CZ8L04ST1103 |  | Excavation works for GRP Pipe Line 700 mm - (RD-L-04)-Z8-L04-ST | 2d | 2026-09-15 A | 2027-03-21 | RHD4CZ8L04ST1104 | 100% | -125.02d |
| RHD4CZ8L04ST1203 |  | Bedding works for GRP Pipe Line 700 mm - (RD-L-04)-Z8-L04-ST | 2d | 2026-09-19 A | 2027-03-23 | RHD4CZ8L04ST1103 | 30% | -125.02d |
| RHD4CZ8L04ST1303 |  | Installing for GRP Pipe Line 700 mm - (RD-L-04)-Z8-L04-ST | 2d | 2026-09-20 A | 2027-03-25 | RHD4CZ8L04ST1203 | 30% | -125.02d |
| RHD4CZ8L04ST1403 |  | Primary Test for GRP Pipe Line 700 mm - (RD-L-04)-Z8-L04-ST | 2d | 2027-03-25 | 2027-03-28 | RHD4CZ8L04ST1303 |  | -125.02d |
| RHD4CZ8L04ST1503 |  | Backfilling and warning tape works for GRP Pipe Line 700 mm - (RD-L-04)-Z8-L04-ST | 2d | 2027-03-28 | 2027-03-30 | RHD4CZ8L04ST1403 |  | -125.02d |
|  | 3737 | **RHD4-02-002-L04-(ST)-GRP Pipes - 500 mm diameter** |  | 2026-09-15 | 2027-04-01 |  |  |  |
| RHD4CZ8L04ST1101 |  | Excavation works for GRP Pipe Line 500 mm - (RD-L-04)-Z8-L04-ST | 2d | 2026-09-15 A | 2026-09-16 A | RHD4CZ8L04ST1102 | 100% |  |
| RHD4CZ8L04ST1201 |  | Bedding works for GRP Pipe Line 500 mm - (RD-L-04)-Z8-L04-ST | 2d | 2027-03-23 | 2027-03-25 | RHD4CZ8L04ST1101 |  | -125.02d |
| RHD4CZ8L04ST1301 |  | Installing for GRP Pipe Line 500 mm - (RD-L-04)-Z8-L04-ST | 2d | 2027-03-25 | 2027-03-28 | RHD4CZ8L04ST1201, RHD4CZ8L04ST1303 |  | -125.02d |
| RHD4CZ8L04ST1401 |  | Primary Test for GRP Pipe Line 500 mm - (RD-L-04)-Z8-L04-ST | 2d | 2027-03-28 | 2027-03-30 | RHD4CZ8L04ST1301 |  | -125.02d |
| RHD4CZ8L04ST1501 |  | Backfilling and warning tape works for GRP Pipe Line 500 mm - (RD-L-04)-Z8-L04-ST | 2d | 2027-03-30 | 2027-04-01 | RHD4CZ8L04ST1401, RHD4CZ8L04ST1503 |  | -125.02d |
|  | 7347 | **RHD4-02-002-L04-(ST)-MH Works - 1500 mm diameter** |  | 2026-09-19 | 2027-06-23 |  |  |  |
| RHD4CZ8L04ST3101 |  | Excavation and PC Blinding works for MH 1500 mm - (RD-L-04)-Z8-L04-ST | 6d | 2026-09-19 A | 2026-09-23 A | RHD4ENSDZ8APPST110, RHD4ENMSST2000, RHD4CZ8L04ST1501, RHD4CZ8L04ST3102, RHD4CZ8L04ST3102 FF | 100% |  |
| RHD4CZ8L04ST3201 |  | Installation of Base for MH 1500 mm - (RD-L-04)-Z8-L04-ST | 6d | 2026-09-21 A | 2027-04-21 | RHD4PRSHLSTAGST1607, RHD4CZ8L04ST3101 | 50% | -104.02d |
| RHD4CZ8L04ST3301 |  | MH Ring and C.Slab works and Backfilling works for MH 1500 mm - (RD-L-04)-Z8-L04-ST | 6d | 2027-04-21 | 2027-04-28 | RHD4PRSHLDOSST1607, RHD4CZ8L04ST3201 |  | -104.02d |
| RHD4CZ8L04ST3401 |  | Steel Cover for MH 1500 mm - (RD-L-04)-Z8-L04-ST | 4d | 2027-04-28 | 2027-05-03 | RHD4PRSHLDOSST1707, RHD4PRSHLSTAGST1707, RHD4CZ8L04ST3301, RHD4CZ8L04ST3402 |  | -104.02d |
| RHD4CZ8L04ST3501 |  | Finishing, Benching, Testing works for MH 1500 mm - (RD-L-04)-Z8-L04-ST | 6d | 2027-06-16 | 2027-06-23 | RHD4CZ8L04ST3500, RHD4CZ8L04ST3401, RHD4CZ8L04ST2500 |  | -138.02d |
|  | 7337 | **RHD4-02-002-L04-(ST)-GRP Pipes - 1100 mm diameter** |  |  |  |  |  |  |
|  | 7336 | **RHD4-02-002-L04-(ST)-GRP Pipes - 1000 mm diameter** |  |  |  |  |  |  |
|  | 7335 | **RHD4-02-002-L04-(ST)-GRP Pipes - 900 mm diameter** |  | 2026-08-27 | 2027-03-28 |  |  |  |
| RHD4CZ8L04ST1105 |  | Excavation works for GRP Pipe Line 900 mm - (RD-L-04)-Z8-L04-ST | 2d | 2026-08-27 A | 2027-03-16 | RHD4ENSDZ8APPST110, RHD4CZ8L04ST1108 | 56% | -125.02d |
| RHD4CZ8L04ST1205 |  | Bedding works for GRP Pipe Line 900 mm - (RD-L-04)-Z8-L04-ST | 2d | 2026-09-15 A | 2027-03-20 | RHD4CZ8L04ST1105 | 56% | -108.02d |
| RHD4CZ8L04ST1305 |  | Installing for GRP Pipe Line 900 mm - (RD-L-04)-Z8-L04-ST | 2d | 2026-09-16 A | 2027-03-22 | RHD4PRSHLSTAGST1007, RHD4CZ8L04ST1205, RHD4PRSHLDOSST1607, RHD4PRSHLPOST1000, RHD4PRSHLDOSST1007 | 56% | -108.02d |
| RHD4CZ8L04ST1505 |  | Backfilling and warning tape works for GRP Pipe Line 900 mm - (RD-L-04)-Z8-L04-ST | 2d | 2026-09-17 A | 2027-03-28 | RHD4CZ8L04ST1405 |  | -108.02d |
| RHD4CZ8L04ST1405 |  | Primary Test for GRP Pipe Line 900 mm - (RD-L-04)-Z8-L04-ST | 2d | 2027-03-22 | 2027-03-24 | RHD4CZ8L04ST1305 |  | -108.02d |
|  | 7334 | **RHD4-02-002-L04-(ST)-GRP Pipes - 800 mm diameter** |  | 2026-09-15 | 2027-03-30 |  |  |  |
| RHD4CZ8L04ST1104 |  | Excavation works for GRP Pipe Line 800 mm - (RD-L-04)-Z8-L04-ST | 2d | 2026-09-15 A | 2027-03-18 | RHD4ENSDZ8APPST110, RHD4CZ8L04ST1105 | 30% | -125.02d |
| RHD4CZ8L04ST1204 |  | Bedding works for GRP Pipe Line 800 mm - (RD-L-04)-Z8-L04-ST | 2d | 2026-09-16 A | 2027-03-21 | RHD4CZ8L04ST1104 | 30% | -106.02d |
| RHD4CZ8L04ST1304 |  | Installing for GRP Pipe Line 800 mm - (RD-L-04)-Z8-L04-ST | 2d | 2026-09-17 A | 2027-03-24 | RHD4PRSHLSTAGST1007, RHD4CZ8L04ST1204, RHD4CZ8L04ST1305, RHD4PRSHLDOSST1607, RHD4PRSHLPOST1000, RHD4PRSHLDOSST1007 | 30% | -107.02d |
| RHD4CZ8L04ST1404 |  | Primary Test for GRP Pipe Line 800 mm - (RD-L-04)-Z8-L04-ST | 2d | 2027-03-24 | 2027-03-27 | RHD4CZ8L04ST1304 |  | -107.02d |
| RHD4CZ8L04ST1504 |  | Backfilling and warning tape works for GRP Pipe Line 800 mm - (RD-L-04)-Z8-L04-ST | 2d | 2027-03-28 | 2027-03-30 | RHD4CZ8L04ST1404, RHD4CZ8L04ST1505 |  | -108.02d |
|  | 7344 | **RHD4-02-002-L04-(ST)-UPVC Pipes - 300 mm diameter** |  | 2027-03-23 | 2027-06-16 |  |  |  |
| RHD4CZ8L04ST2100 |  | Excavation works for UPVC Pipe Line 300 mm - (RD-L-04)-Z8-L04-ST | 2d | 2027-03-23 | 2027-03-25 | RHD4ENSDZ8APPST110, RHD4CZ8L04ST1100 |  | -119.02d |
| RHD4CZ8L04ST2200 |  | Bedding works for UPVC Pipe Line 300 mm - (RD-L-04)-Z8-L04-ST | 2d | 2027-03-25 | 2027-03-28 | RHD4CZ8L04ST2100 |  | -107.02d |
| RHD4CZ8L04ST2300 |  | Installing for UPVC Pipe Line 300 mm - (RD-L-04)-Z8-L04-ST | 2d | 2027-06-09 | 2027-06-12 | RHD4PRSHLDOSST1107, RHD4PRSHLSTAGST1107, RHD4CZ8L04ST2200, RHD4CZ8L04ST7300 |  | -166.02d |
| RHD4CZ8L04ST2400 |  | Primary Test for UPVC Pipe Line 300 mm - (RD-L-04)-Z8-L04-ST | 2d | 2027-06-12 | 2027-06-14 | RHD4CZ8L04ST2300 |  | -138.02d |
| RHD4CZ8L04ST2500 |  | Backfilling and warning tape works for UPVC Pipe Line 300 mm - (RD-L-04)-Z8-L04-ST | 2d | 2027-06-14 | 2027-06-16 | RHD4CZ8L04ST2400, RHD4CZ8L04ST6100 |  | -138.02d |
|  | 7352 | **RHD4-02-002-L04-(ST)-Concrete Encasement** |  | 2027-06-09 | 2027-06-12 |  |  |  |
| RHD4CZ8L04ST6100 |  | Pipe Encasement for Storm Pipelines - (RD-L-04)-Z8-L04-ST | 2d | 2027-06-09 | 2027-06-12 | RHD4CZ8L04ST2300 SS, RHD4CZ8L04ST2300 FF, RHD4CZ8L04ST2200 |  | -166.02d |
|  | 7353 | **RHD4-02-002-Z8-L04-Catch Basin - ST** |  | 2027-06-02 | 2027-07-25 |  |  |  |
|  | 7354 | **RHD4-02-002-L04-(ST)-Single Catch Basin Works** |  | 2027-06-02 | 2027-07-25 |  |  |  |
| RHD4CZ8L04ST7100 |  | Excavation works for Single Catch Basin - (RD-L-04)-Z8-L04-ST | 2d | 2027-06-02 | 2027-06-05 | RHD4ENSDZ8APPST110, RHD4CZ8L04ST3300 |  | -166.02d |
| RHD4CZ8L04ST7200 |  | PC Blinding, Installation and Pipe connection for Single Catch Basin - (RD-L-04)-Z8-L04-ST | 2d | 2027-06-05 | 2027-06-07 | RHD4CZ8L04ST7100 |  | -166.02d |
| RHD4CZ8L04ST7300 |  | Rings & C.Slab & Final Backfill for Single Catch Basin - (RD-L-04)-Z8-L04-ST | 2d | 2027-06-07 | 2027-06-09 | RHD4PRSHLDOSST1307, RHD4PRSHLSTAGST1307, RHD4CZ8L04ST7200 |  | -166.02d |
| RHD4CZ8L04ST7400 |  | Steel Cover for Single Catch Basin - (RD-L-04)-Z8-L04-ST | 2d | 2027-07-19 | 2027-07-21 | RHD4PRSHLDOSST1707, RHD4CZ8L04ST7300, RHD4CZ8L04PT4300 |  | -162.02d |
| RHD4CZ8L04ST7500 |  | Finishing and Insulation works for Single Catch Basin - (RD-L-04)-Z8-L04-ST | 3d | 2027-07-21 | 2027-07-25 | RHD4CZ8L04ST3501, RHD4CZ8L04ST7400 |  | -162.02d |

| ID | WBS | Task | Duration | Start | Finish | Predecessors | Complete | Total float |
| --- | --- | --- | --- | --- | --- | --- | --- | --- |
|  | 6409 | **RHD4-02-002-L016-(ST)-Double Catch Basin Works** |  | 2027-06-05 | 2027-06-16 |  |  |  |
| RHD4CZ8L04ST8100 |  | Excavation works for Double Catch Basin - (RD-L-16)-Z5-L016-ST | 2d | 2027-06-05 | 2027-06-07 | RHD4CZ8L04ST7100 |  | -150.02d |
| RHD4CZ8L04ST8200 |  | PC Blinding, Installation and Pipe connection for Double Catch Basin - (RD-L-16)-Z5-L016-ST | 2d | 2027-06-07 | 2027-06-09 | RHD4CZ8L04ST8100 |  | -150.02d |
| RHD4CZ8L04ST8300 |  | Rings & C.Slab & Final Backfillfor Double Catch Basin - (RD-L-16)-Z5-L016-ST | 2d | 2027-06-09 | 2027-06-12 | RHD4CZ8L04ST8200 |  | -150.02d |
| RHD4CZ8L04ST8400 |  | Steel Cover for Double Catch Basin - (RD-L-16)-Z5-L016-ST | 2d | 2027-06-12 | 2027-06-14 | RHD4CZ8L04ST8300 |  | -150.02d |
| RHD4CZ8L04ST8500 |  | Finishing and Insulation works for Double Catch Basin - (RD-L-16)-Z5-L016-ST | 2d | 2027-06-14 | 2027-06-16 | RHD4CZ8L04ST8400 |  | -150.02d |
|  | 7378 | **RHD4-02-002-Z8-L04-Sewage Network - SW** |  | 2026-09-15 | 2027-07-07 |  |  |  |
|  | 7383 | **RHD4-02-002-L04-(SW)-GRP Pipes - 700 mm diameter** |  |  |  |  |  |  |
|  | 957 | **RHD4-02-002-L04-(SW)-MH Works - 1200 mm diameter with Back drop** |  | 2026-09-17 | 2027-06-28 |  |  |  |
| RHD4CZ8L04SW3101 |  | Excavation and PC Blinding works for MH 1200 mm - (RD-L-04)-Z8-L04-SW | 2d | 2026-09-17 A | 2026-09-19 A | RHD4CZ8L04ST8500, RHD4CZ8L04SW2300 | 100% |  |
| RHD4CZ8L04SW3201 |  | Installation of Base for MH 1200 mm - (RD-L-04)-Z8-L04-SW | 2d | 2027-06-19 | 2027-06-21 | RHD4CZ8L04SW3101 |  | -152.02d |
| RHD4CZ8L04SW3301 |  | MH Ring and C.Slab works and Backfilling works for MH 1200 mm - (RD-L-04)-Z8-L04-SW | 2d | 2027-06-21 | 2027-06-23 | RHD4CZ8L04SW3201 |  | -152.02d |
| RHD4CZ8L04SW3401 |  | Steel Cover for MH 1200 mm - (RD-L-04)-Z8-L04-SW | 2d | 2027-06-23 | 2027-06-26 | RHD4CZ8L04SW3301 |  | -152.02d |
| RHD4CZ8L04SW3501 |  | Finishing, Benching, Testing works for MH 1200 mm - (RD-L-04)-Z8-L04-SW | 2d | 2027-06-26 | 2027-06-28 | RHD4CZ8L04SW3401 |  | -152.02d |
|  | 3794 | **RHD4-02-002-L04-(SW)-MH Works - 1200 mm diameter** |  | 2026-09-15 | 2027-07-07 |  |  |  |
| RHD4CZ8L04SW3100 |  | Excavation and PC Blinding works for MH 1200 mm - (RD-L-04)-Z8-L04-SW | 3d | 2026-09-15 A | 2026-09-17 A | RHD4CZ8L04SW3101 | 100% |  |
| RHD4CZ8L04SW3200 |  | Installation of Base for MH 1200 mm - (RD-L-04)-Z8-L04-SW | 4d | 2027-06-19 | 2027-06-23 | RHD4CZ8L04SW3100 |  | -151.02d |
| RHD4CZ8L04SW3300 |  | MH Ring and C.Slab works and Backfilling works for MH 1200 mm - (RD-L-04)-Z8-L04-SW | 4d | 2027-06-23 | 2027-06-28 | RHD4CZ8L04SW3200 |  | -151.02d |
| RHD4CZ8L04SW3400 |  | Steel Cover for MH 1200 mm - (RD-L-04)-Z8-L04-SW | 4d | 2027-06-28 | 2027-07-03 | RHD4CZ8L04SW3300 |  | -151.02d |
| RHD4CZ8L04SW3500 |  | Finishing, Benching, Testing works for MH 1200 mm - (RD-L-04)-Z8-L04-SW | 4d | 2027-07-03 | 2027-07-07 | RHD4CZ8L04SW3400 |  | -151.02d |
|  | 3785 | **RHD4-02-002-L04-(SW)-GRP Pipes - 300 mm diameter** |  | 2026-09-15 | 2027-06-23 |  |  |  |
| RHD4CZ8L04SW1100 |  | Excavation works for GRP Pipe Line 300 mm - (RD-L-04)-Z8-L04-SW | 2d | 2026-09-15 A | 2027-06-14 | RHD4CZ8L04ST6100, RHD4CZ8L04ST2100 | 42% | -166.02d |
| RHD4CZ8L04SW1200 |  | Bedding works for GRP Pipe Line 300 mm - (RD-L-04)-Z8-L04-SW | 2d | 2026-10-27 A | 2027-06-16 | RHD4CZ8L04SW1100 | 42% | -158.02d |
| RHD4CZ8L04SW1300 |  | Installing for GRP Pipe Line 300 mm - (RD-L-04)-Z8-L04-SW | 2d | 2026-10-29 A | 2027-06-19 | RHD4CZ8L04SW1200 | 42% | -158.02d |
| RHD4CZ8L04SW1400 |  | Primary Test for GRP Pipe Line 300 mm - (RD-L-04)-Z8-L04-SW | 2d | 2027-06-19 | 2027-06-21 | RHD4CZ8L04SW1300 |  | -158.02d |
| RHD4CZ8L04SW1500 |  | Backfilling and warning tape works for GRP Pipe Line 300 mm - (RD-L-04)-Z8-L04-SW | 2d | 2027-06-21 | 2027-06-23 | RHD4CZ8L04SW1400 |  | -157.02d |
|  | 3790 | **RHD4-02-002-L04-(SW)-UPVC Pipes - 200 mm diameter** |  | 2026-09-15 | 2027-07-01 |  |  |  |
| RHD4CZ8L04SW2100 |  | Excavation works for UPVC Pipe Line 200 mm - (RD-L-04)-Z8-L04-SW | 2d | 2026-09-15 A | 2026-09-17 A | RHD4CZ8L04SW1100 | 100% |  |
| RHD4CZ8L04SW2200 |  | Bedding works for UPVC Pipe Line 200 mm - (RD-L-04)-Z8-L04-SW | 2d | 2026-09-16 A | 2026-09-19 A | RHD4CZ8L04SW2100, RHD4CZ8L04SW1200 | 100% |  |
| RHD4CZ8L04SW2300 |  | Installing for UPVC Pipe Line 200 mm - (RD-L-04)-Z8-L04-SW | 2d | 2026-09-17 A | 2026-10-27 A | RHD4CZ8L04SW2200, RHD4CZ8L04SW1300 | 100% |  |
| RHD4CZ8L04SW2500 |  | Backfilling and warning tape works for UPVC Pipe Line 200 mm - (RD-L-04)-Z8-L04-SW | 6d | 2026-10-27 A | 2027-07-01 | RHD4CZ8L04SW2400, RHD4CZ8L04SW1500 | 29% | -158.02d |
| RHD4CZ8L04SW2400 |  | Primary Test for UPVC Pipe Line 200 mm - (RD-L-04)-Z8-L04-SW | 3d | 2027-06-21 | 2027-06-24 | RHD4CZ8L04SW2300, RHD4CZ8L04SW1400 |  | -158.02d |
|  | 7387 | **RHD4-02-002-L04-(SW)-Concrete Encasement** |  |  |  |  |  |  |
|  | 7415 | **RHD4-02-002-Z8-L04-Potable Network - PT** |  | 2027-06-15 | 2027-07-31 |  |  |  |
|  | 7417 | **RHD4-02-002-L04-(PT)-HDPE Pipes - 160 mm diameter** |  | 2027-06-15 | 2027-07-22 |  |  |  |
| RHD4CZ8L04PT1101 |  | Excavation works for HDPE Pipline 160 mm - (RD-L-04)-Z8-L04-PT | 6d | 2027-06-15 | 2027-06-22 | RHD4ENSDZ8APPPT130, RHD4ENMSPT2000, RHD4CZ8L04SW2100, RHD4CZ5L08IRR3202 |  | -167.02d |
| RHD4CZ8L04PT1201 |  | Bedding works for HDPE Pipline 160 mm - (RD-L-04)-Z8-L04-PT | 6d | 2027-06-22 | 2027-06-29 | RHD4CZ8L04PT1101 |  | -164.02d |
| RHD4CZ8L04PT1301 |  | Installing for HDPE Pipline 160 mm - (RD-L-04)-Z8-L04-PT | 9d | 2027-06-29 | 2027-07-10 | RHD4PRSHLDOSPT1000, RHD4PRSHLSTAGPT1000, RHD4CZ8L04PT1201 |  | -164.02d |
| RHD4CZ8L04PT1401 |  | Primary Test for HDPE Pipline 160 mm - (RD-L-04)-Z8-L04-PT | 4d | 2027-07-10 | 2027-07-14 | RHD4CZ8L04PT1301 |  | -164.02d |
| RHD4CZ8L04PT1501 |  | Backfilling and warning tape works for HDPE Pipline 160 mm - (RD-L-04)-Z8-L04-PT | 7d | 2027-07-14 | 2027-07-22 | RHD4CZ8L04PT1401 |  | -164.02d |
|  | 6478 | **RHD4-02-002-L04-(PT)-Wash out Valve Chambers** |  | 2027-06-24 | 2027-07-04 |  |  |  |
| RHD4CZ8L04PT2101 |  | Excavation and Bedding for Wash out Valve Chambers for Potable Water Network - (RD-L-04)-Z8-L04-PT | 2d | 2027-06-24 | 2027-06-27 | RHD4CZ8L04PT1100 |  | -128.02d |
| RHD4CZ8L04PT2201 |  | PC works for Wash out Valve Chambers for Potable Water Network - (RD-L-04)-Z8-L04-PT | 2d | 2027-06-27 | 2027-06-29 | RHD4CZ8L04PT2101 |  | -128.02d |
| RHD4CZ8L04PT2301 |  | Installation for Wash out Valve Chambers for Potable Water Network - (RD-L-04)-Z8-L04-PT | 2d | 2027-06-29 | 2027-07-01 | RHD4CZ8L04PT2201 |  | -128.02d |
| RHD4CZ8L04PT2401 |  | Backfilling works for Wash out Valve Chambers for Potable Water Network - (RD-L-04)-Z8-L04-PT | 2d | 2027-07-01 | 2027-07-04 | RHD4CZ8L04PT2301 |  | -128.02d |
|  | 6479 | **RHD4-02-002-L04-(PT)-Wash out Valves** |  | 2027-07-01 | 2027-07-06 |  |  |  |
| RHD4CZ8L04PT3102 |  | Installation for Wash out Valves for Potable Water Network - (RD-L-04)-Z8-L04-PT | 2d | 2027-07-01 | 2027-07-04 | RHD4CZ8L04PT2301 |  | -128.02d |
| RHD4CZ8L04PT3202 |  | Stem and Service box for Wash out Valves for Potable Water Network - (RD-L-04)-Z8-L04-PT | 2d | 2027-07-04 | 2027-07-06 | RHD4CZ8L04PT3102, RHD4CZ8L04PT2401 |  | -128.02d |
|  | 6102 | **RHD4-02-002-L04-(PT)-Air Valve Chambers** |  | 2027-06-27 | 2027-07-06 |  |  |  |
| RHD4CZ8L04PT2102 |  | Excavation and Bedding for Air Valve Chambers for Potable Water Network - (RD-L-04)-Z8-L04-PT | 2d | 2027-06-27 | 2027-06-29 | RHD4CZ8L04PT2101 |  | -128.02d |
| RHD4CZ8L04PT2202 |  | PC works for Air Valve Chambers for Potable Water Network - (RD-L-04)-Z8-L04-PT | 2d | 2027-06-29 | 2027-07-01 | RHD4CZ8L04PT2102 |  | -128.02d |
| RHD4CZ8L04PT2302 |  | Installation for Air Valve Chambers for Potable Water Network - (RD-L-04)-Z8-L04-PT | 2d | 2027-07-01 | 2027-07-04 | RHD4CZ8L04PT2202 |  | -128.02d |
| RHD4CZ8L04PT2402 |  | Backfilling works for Air Valve Chambers for Potable Water Network - (RD-L-04)-Z8-L04-PT | 2d | 2027-07-04 | 2027-07-06 | RHD4CZ8L04PT2302 |  | -128.02d |
|  | 6103 | **RHD4-02-002-L04-(PT)-Air Valves** |  | 2027-07-04 | 2027-07-08 |  |  |  |
| RHD4CZ8L04PT3103 |  | Installation for Air Valves for Potable Water Network - (RD-L-04)-Z8-L04-PT | 2d | 2027-07-04 | 2027-07-06 | RHD4CZ8L04PT2302 |  | -128.02d |
| RHD4CZ8L04PT3203 |  | Stem and Service box for Air Valves for Potable Water Network - (RD-L-04)-Z8-L04-PT | 2d | 2027-07-06 | 2027-07-08 | RHD4CZ8L04PT3103, RHD4CZ8L04PT2402, RHD4CZ8L04PT3202 |  | -128.02d |
|  | 7416 | **RHD4-02-002-L04-(PT)-HDPE Pipes - 110 mm diameter** |  | 2027-06-22 | 2027-07-04 |  |  |  |
| RHD4CZ8L04PT1100 |  | Excavation works for HDPE Pipline 110 mm - (RD-L-04)-Z8-L04-PT | 2d | 2027-06-22 | 2027-06-24 | RHD4ENSDZ8APPPT130, RHD4ENMSPT2000, RHD4CZ8L04PT1101 |  | -167.02d |
| RHD4CZ8L04PT1200 |  | Bedding works for HDPE Pipline 110 mm - (RD-L-04)-Z8-L04-PT | 2d | 2027-06-24 | 2027-06-27 | RHD4CZ8L04PT1100 |  | -165.02d |
| RHD4CZ8L04PT1300 |  | Installing for HDPE Pipline 110 mm - (RD-L-04)-Z8-L04-PT | 2d | 2027-06-27 | 2027-06-29 | RHD4PRSHLDOSPT1000, RHD4PRSHLSTAGPT1000, RHD4CZ8L04PT1200, RHD4CZ9L02SW2500 |  | -165.02d |
| RHD4CZ8L04PT1400 |  | Primary Test for HDPE Pipline 110 mm - (RD-L-04)-Z8-L04-PT | 2d | 2027-06-29 | 2027-07-01 | RHD4CZ8L04PT1300 |  | -165.02d |
| RHD4CZ8L04PT1500 |  | Backfilling and warning tape works for HDPE Pipline 110 mm - (RD-L-04)-Z8-L04-PT | 2d | 2027-07-01 | 2027-07-04 | RHD4CZ8L04PT1400 |  | -165.02d |
|  | 7421 | **RHD4-02-002-L04-(PT)-Gate Valves (Direct Buried)** |  | 2027-07-05 | 2027-07-27 |  |  |  |
| RHD4CZ8L04PT3100 |  | Installation for Direct Buried Gate Valves - (RD-L-04)-Z8-L04-PT | 4d | 2027-07-05 | 2027-07-10 | RHD4PRSHLDOSPT1200, RHD4PRSHLSTAGPT1200, RHD4CZ8L04PT1301 FF, RHD4CZ8L04PT1300 FF, RHD4CZ8L04PT1301 SS, RHD4CZ8L04PT1300 SS |  | -153.02d |
| RHD4CZ8L04PT3200 |  | Stem and Service box for Direct Buried Gate Valves - (RD-L-04)-Z8-L04-PT | 4d | 2027-07-22 | 2027-07-27 | RHD4PRSHLDOSPT1300, RHD4PRSHLSTAGPT1300, RHD4CZ8L04PT3100, RHD4CZ8L04PT1501, RHD4CZ8L04PT1500 |  | -164.02d |
|  | 7428 | **RHD4-02-002-L04-(PT)-Fire Hydrant** |  | 2027-06-24 | 2027-07-31 |  |  |  |
| RHD4CZ8L04PT4100 |  | Excavation and Bedding and Pipe Installation for Fire Hydrant - (RD-L-04)-Z8-L04-PT | 9d | 2027-06-24 | 2027-07-05 | RHD4ENSDZ8APPPT130, RHD4CZ8L04PT1100 |  | -167.02d |
| RHD4CZ8L04PT4200 |  | Valve Installation for Fire Hydrant - (RD-L-04)-Z8-L04-PT | 6d | 2027-07-05 | 2027-07-12 | RHD4CZ8L04PT4100 |  | -167.02d |
| RHD4CZ8L04PT4300 |  | Stem for Fire Hydrant - (RD-L-04)-Z8-L04-PT | 6d | 2027-07-12 | 2027-07-19 | RHD4CZ8L04PT4200 |  | -167.02d |
| RHD4CZ8L04PT4400 |  | Fire Installation for Fire Hydrant - (RD-L-04)-Z8-L04-PT | 6d | 2027-07-19 | 2027-07-26 | RHD4PRSHLDOSPT1500, RHD4PRSHLSTAGPT1500, RHD4CZ8L04PT4300 |  | -167.02d |

| ID | WBS | Task | Duration | Start | Finish | Predecessors | Total float |
| --- | --- | --- | --- | --- | --- | --- | --- |
| RHD4CZ8L04PT4500 |  | Protection Barriers for Fire Hydrant - (RD-L-04)-Z8-L04-PT | 4d | 2027-07-26 | 2027-07-31 | RHD4CZ4L01PT4500, RHD4CZ8L04PT4400 | -167.02d |
|  | 7430 | **RHD4-02-002-Z8-L04-Irrigation Network - IRR** |  | 2027-07-04 | 2027-08-25 |  |  |
|  | 7431 | **RHD4-02-002-L04-(IRR)-HDPE Pipes - 160 mm diameter** |  | 2027-07-06 | 2027-08-21 |  |  |
| RHD4CZ8L04IRR1100 |  | Excavation works for HDPE Pipline 160 mm - (RD-L-04)-Z8-L04-IRR | 10d | 2027-07-06 | 2027-07-18 | RHD4ENSDZ8APPIRR140, RHD4ENMSRR2000, RHD4CZ8L04IRR1103 | -165.02d |
| RHD4CZ8L04IRR1200 |  | Bedding works for HDPE Pipline 160 mm - (RD-L-04)-Z8-L04-IRR | 8d | 2027-07-18 | 2027-07-27 | RHD4CZ8L04IRR1100 | -165.02d |
| RHD4CZ8L04IRR1300 |  | Installing for HDPE Pipline 160 mm - (RD-L-04)-Z8-L04-IRR | 10d | 2027-07-27 | 2027-08-08 | RHD4PRSHLDOSIRR1000, RHD4PRSHLSTAGIRR1000, RHD4CZ8L04IRR1200 | -165.02d |
| RHD4CZ8L04IRR1400 |  | Primary Test for HDPE Pipline 160 mm - (RD-L-04)-Z8-L04-IRR | 3d | 2027-08-08 | 2027-08-11 | RHD4CZ8L04IRR1300, RHD4CZ8L04IRR3100 | -163.02d |
| RHD4CZ8L04IRR1500 |  | Backfilling and warning tape works for HDPE Pipline 160 mm - (RD-L-04)-Z8-L04-IRR | 8d | 2027-08-11 | 2027-08-21 | RHD4CZ8L04IRR1400 | -163.02d |
|  | 7439 | **RHD4-02-002-L04-(IRR)-Gate Valves (Direct Buried)** |  | 2027-08-03 | 2027-08-25 |  |  |
| RHD4CZ8L04IRR3100 |  | Installation for Direct Buried Gate Valves - (RD-L-04)-Z8-L04-IRR | 4d | 2027-08-03 | 2027-08-08 | RHD4PRSHLDOSIRR1100, RHD4PRSHLSTAGIRR1100, RHD4CZ8L04IRR1300 SS, RHD4CZ8L04IRR1300 FF | -163.02d |
| RHD4CZ8L04IRR3200 |  | Stem and Service box for Direct Buried Gate Valves - (RD-L-04)-Z8-L04-IRR | 4d | 2027-08-21 | 2027-08-25 | RHD4PRSHLDOSIRR1300, RHD4PRSHLSTAGIRR1300, RHD4CZ8L04IRR3100, RHD4CZ8L04IRR1500 | -163.02d |
|  | 7432 | **RHD4-02-002-L04-(IRR)-HDPE Pipes - 180 mm diameter** |  |  |  |  |  |
|  | 1770 | **RHD4-02-002-L04-(IRR)-Air Valves** |  | 2027-08-17 | 2027-08-22 |  |  |
| RHD4CZ8L04IRR3103 |  | Installation for Air Valves for Irrigation Network - (RD-L-04)-Z8-L04-IRR | 2d | 2027-08-17 | 2027-08-19 | RHD4CZ8L04IRR2302 | -164.02d |
| RHD4CZ8L04IRR3203 |  | Stem and Service box for Air Valves for Irrigation Network - (RD-L-04)-Z8-L04-IRR | 2d | 2027-08-19 | 2027-08-22 | RHD4CZ8L04IRR3103, RHD4CZ8L04IRR2402, RHD4CZ8L04IRR3202, RHD4CZ8L04PT3203 | -164.02d |
|  | 6685 | **RHD4-02-002-L04-(IRR)-Wash out Chamber** |  | 2027-08-08 | 2027-08-17 |  |  |
| RHD4CZ8L04IRR2101 |  | Excavation and Bedding for Wash out Chamber for Irrigation Network - (RD-L-04)-Z8-L04-IRR | 2d | 2027-08-08 | 2027-08-10 | RHD4CZ8L04IRR1300, RHD4CZ9L06PT1500, RHD4CZ2C082SL1500, RHD4CZ9L06PT3200 | -165.02d |
| RHD4CZ8L04IRR2201 |  | PC works for Wash out Chamber for Irrigation Network - (RD-L-04)-Z8-L04-IRR | 2d | 2027-08-10 | 2027-08-12 | RHD4CZ8L04IRR2101 | -164.02d |
| RHD4CZ8L04IRR2301 |  | Installation for Wash out Chamber for Irrigation Network - (RD-L-04)-Z8-L04-IRR | 2d | 2027-08-12 | 2027-08-15 | RHD4CZ8L04IRR2201 | -164.02d |
| RHD4CZ8L04IRR2401 |  | Backfilling works for Wash out Chamber for Irrigation Network - (RD-L-04)-Z8-L04-IRR | 2d | 2027-08-15 | 2027-08-17 | RHD4CZ8L04IRR2301 | -164.02d |
|  | 6686 | **RHD4-02-002-L04-(IRR)-Wash out Valves** |  | 2027-08-15 | 2027-08-19 |  |  |
| RHD4CZ8L04IRR3102 |  | Installation for Wash out Valve for Irrigation Network - (RD-L-04)-Z8-L04-IRR | 2d | 2027-08-15 | 2027-08-17 | RHD4CZ8L04IRR2301 | -164.02d |
| RHD4CZ8L04IRR3202 |  | Stem and Service box for Wash out Valve for Irrigation Network - (RD-L-04)-Z8-L04-IRR | 2d | 2027-08-17 | 2027-08-19 | RHD4CZ8L04IRR3102, RHD4CZ8L04IRR2401, RHD4CZ8L04IRR5100, RHD4CZ7L131IRR3203 | -164.02d |
|  | 1769 | **RHD4-02-002-L04-(IRR)-Air Valve Chamber** |  | 2027-08-10 | 2027-08-19 |  |  |
| RHD4CZ8L04IRR2102 |  | Excavation and Bedding for Valve Chamber for Irrigation Network - (RD-L-04)-Z8-L04-IRR | 2d | 2027-08-10 | 2027-08-12 | RHD4CZ8L04IRR2101 | -165.02d |
| RHD4CZ8L04IRR2202 |  | PC works for Valve Chamber for Irrigation Network - (RD-L-04)-Z8-L04-IRR | 2d | 2027-08-12 | 2027-08-15 | RHD4CZ8L04IRR2102 | -165.02d |
| RHD4CZ8L04IRR2302 |  | Installation for Valve Chamber for Irrigation Network - (RD-L-04)-Z8-L04-IRR | 2d | 2027-08-15 | 2027-08-17 | RHD4CZ8L04IRR2202, RHD4CZ9C071SW3500 | -165.02d |
| RHD4CZ8L04IRR2402 |  | Backfilling works for Valve Chamber for Irrigation Network - (RD-L-04)-Z8-L04-IRR | 2d | 2027-08-17 | 2027-08-19 | RHD4CZ8L04IRR2302 | -165.02d |
|  | 1771 | **RHD4-02-002-L04-(IRR)-Concrete Encasement** |  | 2027-08-08 | 2027-08-10 |  |  |
| RHD4CZ8L04IRR5100 |  | Pipe Encasement for Irrigation Pipelines - (RD-L-04)-Z8-L04-IRR | 2d | 2027-08-08 | 2027-08-10 | RHD4CZ8L04IRR1300, RHD4CZ8L04IRR1503 | -158.02d |
|  | 3651 | **RHD4-02-002-L04-(IRR)-HDPE Pipes - 250 mm diameter** |  | 2027-07-04 | 2027-07-15 |  |  |
| RHD4CZ8L04IRR1103 |  | Excavation works for HDPE Pipline 250 mm - (RD-L-04)-Z8-L04-IRR | 2d | 2027-07-04 | 2027-07-06 | RHD4CZ8L04PT1500 | -165.02d |
| RHD4CZ8L04IRR1203 |  | Bedding works for HDPE Pipline 250 mm - (RD-L-04)-Z8-L04-IRR | 2d | 2027-07-06 | 2027-07-08 | RHD4CZ8L04IRR1103 | -161.02d |
| RHD4CZ8L04IRR1303 |  | Installing for HDPE Pipline 250 mm - (RD-L-04)-Z8-L04-IRR | 2d | 2027-07-08 | 2027-07-11 | RHD4CZ8L04IRR1203 | -161.02d |
| RHD4CZ8L04IRR1403 |  | Primary Test for HDPE Pipline 250 mm - (RD-L-04)-Z8-L04-IRR | 2d | 2027-07-11 | 2027-07-13 | RHD4CZ8L04IRR1303 | -161.02d |
| RHD4CZ8L04IRR1503 |  | Backfilling and warning tape works for HDPE Pipline 250 mm - (RD-L-04)-Z8-L04-IRR | 2d | 2027-07-13 | 2027-07-15 | RHD4CZ8L04IRR1403 | -161.02d |
|  | 7464 | **RHD4-02-002-Z8-L04-Medium Voltage Network - MV** |  | 2027-06-30 | 2027-07-13 |  |  |
|  | 7465 | **RHD4-02-002-L04-(MV)-Medium Voltage cable trench** |  | 2027-06-30 | 2027-07-13 |  |  |
| RHD4CZ8L04MV1100 |  | Excavation for Medium Voltage Trench - (RD-L-04)-Z8-L04-MV | 2d | 2027-06-30 | 2027-07-03 | RHD4ENSDZ8APPMV150, RHD4CZ8L04RD3100, RHD4CZ8RA04MV3400 | -146.02d |
| RHD4CZ8L04MV1200 |  | Trench Backfilling for Medium Voltage Network - (RD-L-04)-Z8-L04-MV | 2d | 2027-07-11 | 2027-07-13 | RHD4CZ8L04MV3300 | -136.02d |
|  | 7466 | **RHD4-02-002-L04-(MV)-Medium Voltage duct banks** |  |  |  |  |  |
|  | 7467 | **RHD4-02-002-L04-(MV)-Medium Voltage cables 3Cx 500 mm²** |  | 2027-07-03 | 2027-07-11 |  |  |
| RHD4CZ8L04MV3100 |  | Installation of Medium Voltage Cables 3Cx 500 mm² - (RD-L-04)-Z8-L04-MV | 3d | 2027-07-03 | 2027-07-06 | RHD4PRSHLDOSMV1100, RHD4ENMSMV2000, RHD4ENMSMV2010, RHD4PRSHLSTAGMV1100, RHD4CZ8L04MV1100 | -136.02d |
| RHD4CZ8L04MV3200 |  | Joints Installation of Medium Voltage Cables 3Cx 500 mm² - (RD-L-04)-Z8-L04-MV | 2d | 2027-07-06 | 2027-07-08 | RHD4PRSHLDOSMV1300, RHD4PRSHLSTAGMV1300, RHD4CZ8L04MV3100 | -136.02d |
| RHD4CZ8L04MV3300 |  | Testing of Medium Voltage Cables 3Cx 500 mm² - (RD-L-04)-Z8-L04-MV | 2d | 2027-07-08 | 2027-07-11 | RHD4CZ8L04MV3200 | -136.02d |
|  | 7471 | **RHD4-02-002-Z8-L04-Low Voltage Network - LV** |  | 2027-08-21 | 2027-08-30 |  |  |
|  | 7472 | **RHD4-02-002-L04-(LV)-Low Voltage duct banks** |  | 2027-08-21 | 2027-08-30 |  |  |
| RHD4CZ8L04LV2100 |  | Excavation of Duct Banks for Low Voltage Network - (RD-L-04)-Z8-L04-LV | 2d | 2027-08-21 | 2027-08-23 | RHD4ENSDZ8APPLV160, RHD4CZ8L04RW3000, RHD4CZ8L04IRR1500 | -162.02d |
| RHD4CZ8L04LV2200 |  | Installation of Duct Banks for Low Voltage Network - (RD-L-04)-Z8-L04-LV | 2d | 2027-08-23 | 2027-08-25 | RHD4PRSHLDOSLV1000, RHD4PRSHLSTAGLV1000, RHD4CZ8L04LV2100 | -161.02d |
| RHD4CZ8L04LV2300 |  | Pouring of Duct Banks for Low Voltage Network - (RD-L-04)-Z8-L04-LV | 2d | 2027-08-25 | 2027-08-28 | RHD4CZ8L04LV2200 | -159.02d |
| RHD4CZ8L04LV2400 |  | Backfilling of Duct Banks for Low Voltage Network - (RD-L-04)-Z8-L04-LV | 2d | 2027-08-28 | 2027-08-30 | RHD4CZ8L04LV2300 | -152.02d |
|  | 7477 | **RHD4-02-002-Z8-L04-Street Lighting Network - SL** |  | 2027-07-13 | 2027-10-20 |  |  |
|  | 7478 | **RHD4-02-002-L04-(SL)-Street Lighting duct banks** |  | 2027-08-23 | 2027-09-06 |  |  |
| RHD4CZ8L04SL2100 |  | Excavation of Duct Banks for Street Lighting Network - (RD-L-04)-Z8-L04-SL | 3d | 2027-08-23 | 2027-08-26 | RHD4ENSDZ8APPSL170, RHD4CZ8L04LV2100 | -162.02d |
| RHD4CZ8L04SL2200 |  | Installation of Duct Banks for Street Lighting Network - (RD-L-04)-Z8-L04-SL | 4d | 2027-08-26 | 2027-08-31 | RHD4PRSHLDOSSL1000, RHD4PRSHLSTAGSL1000, RHD4CZ8L04SL2100, RHD4CZ8L04LV2200 | -162.02d |
| RHD4CZ8L04SL2300 |  | Pouring of Duct Banks for Street Lighting Network - (RD-L-04)-Z8-L04-SL | 3d | 2027-08-31 | 2027-09-04 | RHD4CZ8L04SL2200, RHD4CZ8L04LV2300 | -162.02d |
| RHD4CZ8L04SL2400 |  | Backfilling of Duct Banks for Street Lighting Network - (RD-L-04)-Z8-L04-SL | 2d | 2027-09-04 | 2027-09-06 | RHD4CZ8L04SL2300 | -162.02d |
|  | 7479 | **RHD4-02-002-L04-(SL)-Street Lighting Drawpit** |  | 2027-07-13 | 2027-07-18 |  |  |
| RHD4CZ8L04SL5100 |  | Excavation of Drawpit size 600x600x900mm for Street Lighting Network - (RD-L-04)-Z8-L04-SL | 2d | 2027-07-13 | 2027-07-15 | RHD4ENSDZ8APPSL170, RHD4CZ8L04MV1200 | -136.02d |
| RHD4CZ8L04SL5200 |  | Installation of Drawpit size 600x600x900mm for Street Lighting Network - (RD-L-04)-Z8-L04-SL | 2d | 2027-07-15 | 2027-07-18 | RHD4PRSHLDOSSL1400, RHD4PRSHLSTAGSL1400, RHD4CZ8L04SL5100 | -136.02d |
|  | 7480 | **RHD4-02-002-L04-(SL)-Street Lighting cables** |  | 2027-07-18 | 2027-09-05 |  |  |
| RHD4CZ8L04SL3100 |  | Excavation for Street Lighting Cables for Street Lighting Network - (RD-L-04)-Z8-L04-SL | 13d | 2027-07-18 | 2027-08-02 | RHD4ENSDZ8APPSL170, RHD4CZ8L04SL5200 | -136.02d |
| RHD4CZ8L04SL3200 |  | Cable Laying of Street Lighting Cables for Street Lighting Network - (RD-L-04)-Z8-L04-SL | 11d | 2027-08-02 | 2027-08-15 | RHD4PRSHLDOSSL1100, RHD4ENMSSL2000, RHD4ENMSSL2010, RHD4PRSHLSTAGSL1100, RHD4CZ8L04SL3100 | -136.02d |
| RHD4CZ8L04SL3300 |  | Warning tape and Backfill for Street Lighting Cables for Street Lighting Network - (RD-L-04)-Z8-L04-SL | 11d | 2027-08-15 | 2027-08-28 | RHD4CZ8L04SL3200 | -136.02d |
| RHD4CZ8L04SL3400 |  | Testing of Street Lighting Cables for Street Lighting Network - (RD-L-04)-Z8-L04-SL | 7d | 2027-08-28 | 2027-09-05 | RHD4CZ8L04SL3300 | -136.02d |
|  | 7481 | **RHD4-02-002-L04-(SL)-Street Lighting Poles** |  | 2027-09-05 | 2027-10-20 |  |  |
| RHD4CZ8L04SL1100 |  | Excavation for RC Base for Lighting Poles for Street Lighting Network - (RD-L-04)-Z8-L04-SL | 7d | 2027-09-05 | 2027-09-13 | RHD4ENSDZ8APPSL170, RHD4CZ8L04SL3400 | -136.02d |
| RHD4CZ8L04SL1200 |  | Installation for RC Base for Lighting Poles for Street Lighting Network - (RD-L-04)-Z8-L04-SL | 7d | 2027-09-13 | 2027-09-21 | RHD4CZ8L04SL1100 | -136.02d |
| RHD4CZ8L04SL1300 |  | Backfill for RC Base for Lighting Poles for Street Lighting Network - (RD-L-04)-Z8-L04-SL | 7d | 2027-09-21 | 2027-09-30 | RHD4CZ8L04SL1200 | -136.02d |
| RHD4CZ8L04SL1400 |  | Installation for Lighting Poles for Street Lighting Network - (RD-L-04)-Z8-L04-SL | 10d | 2027-09-30 | 2027-10-12 | RHD4PRSHLDOSSL1200, RHD4ENMSSL2000, RHD4ENMSSL2010, RHD4PRSHLSTAGSL1200, RHD4CZ8L04SL1300 | -136.02d |

| ID | WBS | Task | Duration | Start | Finish | Predecessors | Total float |
| --- | --- | --- | --- | --- | --- | --- | --- |
| RHD4CZ8L04SL1500 |  | Luminaire Installation for Lighting Poles for Street Lighting Network - (RD-L-04)-Z8-L04-SL | 7d | 2027-10-12 | 2027-10-20 | RHD4PRSHLDOSSL1300, RHD4PRSHLSTAGSL1300, RHD4CZ8L04SL1400 | -136.02d |
|  | 7483 | **RHD4-02-002-L04-(SL)-Street Lighting Earthing System** |  | 2027-10-12 | 2027-10-14 |  |  |
| RHD4CZ8L04SL6100 |  | Installation of Earthing for Lighting Poles and Fedder Pillers for Street Lighting Network - (RD-L-04)-Z8-L04-SL | 2d | 2027-10-12 | 2027-10-14 | RHD4ENMSER2000, RHD4ENMSER2010, RHD4CZ8L04SL1400 | -133.02d |
|  | 7489 | **RHD4-02-002-Z8-L04-Telecommunications Network - TC** |  | 2027-07-06 | 2027-09-11 |  |  |
|  | 7490 | **RHD4-02-002-L04-(TC)-Telecommunications Ducts** |  | 2027-07-06 | 2027-09-01 |  |  |
| RHD4CZ8L04TC2100 |  | Excavation of HDPE Ducts for Telecom Network - (RD-L-04)-Z8-L04-TC | 14d | 2027-07-06 | 2027-07-22 | RHD4ENSDZ8APPTC190, RHD4CZ8L04IRR1103 | -158.02d |
| RHD4CZ8L04TC2200 |  | Installation of HDPE Ducts for Telecom Network - (RD-L-04)-Z8-L04-TC | 21d | 2027-07-22 | 2027-08-16 | RHD4PRSHLDOSTC1000, RHD4PRSHLSTAGTC1000, RHD4CZ8L04TC2100 | -158.02d |
| RHD4CZ8L04TC2400 |  | Backfilling of HDPE Ducts for Telecom Network - (RD-L-04)-Z8-L04-TC | 14d | 2027-08-16 | 2027-09-01 | RHD4CZ8L04TC2200 | -158.02d |
|  | 7491 | **RHD4-02-002-L04-(TC)-Telecommunications Manholes** |  | 2027-09-01 | 2027-09-11 |  |  |
| RHD4CZ8L04TC5100 |  | Excavation for Manholes for Telecom Network - (RD-L-04)-Z8-L04-TC | 4d | 2027-09-01 | 2027-09-06 | RHD4ENSDZ8APPTC190, RHD4CZ8L04TC2100, RHD4CZ8L04TC2400 | -158.02d |
| RHD4CZ8L04TC5200 |  | Installation of Manholes for Telecom Network - (RD-L-04)-Z8-L04-TC | 4d | 2027-09-06 | 2027-09-11 | RHD4PRSHLDOSTC1200, RHD4PRSHLSTAGTC1200, RHD4CZ8L04TC5100, RHD4CZ8L04LV2400 | -158.02d |
|  | 7492 | **RHD4-02-002-L04-(TC)-Telecomminications Road Crossings** |  |  |  |  |  |
|  | 7493 | **RHD4-02-002-Z8-L04-Information and Communication Technologies - ICT** |  | 2027-02-13 | 2027-11-13 |  |  |
|  | 7494 | **RHD4-02-002-L04-(ICT)-Information and Communication Technologies Ducts** |  | 2027-09-11 | 2027-11-03 |  |  |
| RHD4CZ8L04ICT2100 |  | Excavation of HDPE Ducts for ICT Network - (RD-L-04)-Z8-L04-ICT | 18d | 2027-09-11 | 2027-10-03 | RHD4ENSDZ8APPICT200, RHD4CZ8L04TC2100, RHD4CZ8L04TC5200 | -158.02d |
| RHD4CZ8L04ICT2200 |  | Installation of HDPE Ducts for ICT Network - (RD-L-04)-Z8-L04-ICT | 9d | 2027-10-03 | 2027-10-13 | RHD4PRSHLDOSICT1000, RHD4PRSHLSTAGICT1000, RHD4CZ8L04ICT2100 | -158.02d |
| RHD4CZ8L04ICT2400 |  | Backfilling of HDPE Ducts for ICT Network - (RD-L-04)-Z8-L04-ICT | 18d | 2027-10-13 | 2027-11-03 | RHD4CZ8L04ICT2200 | -158.02d |
|  | 7495 | **RHD4-02-002-L04-(ICT)-Information and Communication Technologies Manholes** |  | 2027-11-03 | 2027-11-13 |  |  |
| RHD4CZ8L04ICT5100 |  | Excavation for Manholes for ICT Network - (RD-L-04)-Z8-L04-ICT | 4d | 2027-11-03 | 2027-11-08 | RHD4ENSDZ8APPICT200, RHD4CZ8L04ICT2400 | -158.02d |
| RHD4CZ8L04ICT5200 |  | Installation of Manholes for ICT Network - (RD-L-04)-Z8-L04-ICT | 4d | 2027-11-08 | 2027-11-13 | RHD4PRSHLDOSICT1200, RHD4PRSHLSTAGICT1200, RHD4CZ8L04ICT5100, RHD4CZ8RA04CCTV6100 | -158.02d |
|  | 7496 | **RHD4-02-002-L04-(ICT)-Information and Communication Technologies Road Crossings** |  | 2027-02-13 | 2027-02-23 |  |  |
| RHD4CZ8L04ICT3100 |  | Excavation for Road Crossings for ICT Network - (RD-L-04)-Z8-L04-ICT | 2d | 2027-02-13 | 2027-02-15 | RHD4ENSDZ8APPICT200, RHD4CZ8RA04TC3100 SS | -183.02d |
| RHD4CZ8L04ICT3200 |  | Installation of Road Crossings for ICT Network - (RD-L-04)-Z8-L04-ICT | 2d | 2027-02-15 | 2027-02-17 | RHD4PRSHLDOSICT1100, RHD4PRSHLSTAGICT1100, RHD4CZ8L04ICT3100 | -183.02d |
| RHD4CZ8L04ICT3300 |  | Pouring of Road Crossings for ICT Network - (RD-L-04)-Z8-L04-ICT | 2d | 2027-02-17 | 2027-02-20 | RHD4CZ8L04ICT3200 | -183.02d |
| RHD4CZ8L04ICT3400 |  | Backfilling of Road Crossings for ICT Network - (RD-L-04)-Z8-L04-ICT | 2d | 2027-02-20 | 2027-02-23 | RHD4CZ8L04ICT3300 | -183.02d |
|  | 7484 | **RHD4-02-002-Z8-L04-Landscape Network - LS** |  |  |  |  |  |
|  | 7485 | **RHD4-02-002-L04-(LS)-Landscape Lighting cables** |  |  |  |  |  |
|  | 7486 | **RHD4-02-002-L04-(LS)-Landscape Feeder Pillars** |  |  |  |  |  |
|  | 7487 | **RHD4-02-002-L04-(LS)-Landscape Bollard Poles** |  |  |  |  |  |
|  | 7488 | **RHD4-02-002-L04-(LS)-Landscape Feeder Pillars Earthing** |  |  |  |  |  |
|  | 7497 | **RHD4-02-002-Z8-L04-Security Network - CCTV** |  | 2027-11-13 | 2027-12-13 |  |  |
|  | 7498 | **RHD4-02-002-L04-(CCTV)-Civil Works** |  | 2027-11-13 | 2027-11-18 |  |  |
| RHD4CZ8L04CCTV2100 |  | Civil Works for Security Network - (RD-L-04)-Z8-L04-CCTV | 5d | 2027-11-13 | 2027-11-18 | RHD4CZ8L04ICT5200, RHD4CZ8L04SL6100 | -158.02d |
|  | 7499 | **RHD4-02-002-L04-(CCTV)-CCTV Poles** |  | 2027-11-18 | 2027-11-30 |  |  |
| RHD4CZ8L04CCTV1100 |  | Excavation for RC Base for CCTV Poles for Security Network - (RD-L-04)-Z8-L04-CCTV | 2d | 2027-11-18 | 2027-11-21 | RHD4ENSDZ8APPCCTV210, RHD4CZ8L04CCTV2100 | -158.02d |
| RHD4CZ8L04CCTV1200 |  | Installation for RC Base for CCTV Poles for Security Network - (RD-L-04)-Z8-L04-CCTV | 2d | 2027-11-21 | 2027-11-23 | RHD4CZ8L04CCTV1100 | -158.02d |
| RHD4CZ8L04CCTV1300 |  | Backfill for RC Base for CCTV Poles for Security Network - (RD-L-04)-Z8-L04-CCTV | 2d | 2027-11-23 | 2027-11-25 | RHD4CZ8L04CCTV1200 | -158.02d |
| RHD4CZ8L04CCTV1400 |  | Installation for CCTV Poles for Security Network - (RD-L-04)-Z8-L04-CCTV | 2d | 2027-11-25 | 2027-11-28 | RHD4PRSHLDOSCCTV1000, RHD4PRSHLSTACCTV1000, RHD4CZ8L04CCTV1300 | -158.02d |
| RHD4CZ8L04CCTV1500 |  | Protection post Installation for CCTV Poles for Security Network - (RD-L-04)-Z8-L04-CCTV | 2d | 2027-11-28 | 2027-11-30 | RHD4CZ8L04CCTV1400 | -158.02d |
|  | 7500 | **RHD4-02-002-L04-(CCTV)-Camera** |  | 2027-11-30 | 2027-12-02 |  |  |
| RHD4CZ8L04CCTV3100 |  | Installation for Cameras for Security Network - (RD-L-04)-Z8-L04-CCTV | 2d | 2027-11-30 | 2027-12-02 | RHD4PRSHLDOSCCTV1100, RHD4PRSHLSTACCTV1100, RHD4CZ8L04CCTV1400, RHD4CZ8L04CCTV4100 | -158.02d |
|  | 7501 | **RHD4-02-002-L04-(CCTV)-Power and Infrastructure** |  | 2027-11-28 | 2027-11-30 |  |  |
| RHD4CZ8L04CCTV4100 |  | Installation of Power outlet, UPS and midspan for PTZ Camerafor Cameras for Security Network - (RD-L-04)-Z8-L04-CCTV | 2d | 2027-11-28 | 2027-11-30 | RHD4PRSHLDOSCCTV1300, RHD4PRSHLSTACCTV1300, RHD4CZ8L04CCTV1400 | -158.02d |
|  | 7503 | **RHD4-02-002-L04-(CCTV)-CCTV Panels and Components** |  | 2027-12-02 | 2027-12-13 |  |  |
| RHD4CZ8L04CCTV6100 |  | Installation for CCTV Panels for Security Network - (RD-L-04)-Z8-L04-CCTV | 9d | 2027-12-02 | 2027-12-13 | RHD4PRSHLDOSCCTV1200, RHD4PRSHLSTACCTV1200, RHD4PRLOLSTACCTV1001, RHD4CZ8L04CCTV3100 | -158.02d |
|  | 7514 | **RHD4-02-002-Z8-C014** |  | 2027-02-23 | 2028-02-07 |  |  |
|  | 7693 | **RHD4-02-002-Z8-C014-Road Works - RD** |  | 2027-02-23 | 2028-02-07 |  |  |
|  | 7696 | **RHD4-02-002-C014-(RD)-Bituminous base course Two Layers, including (MC1)&(RC2)** |  | 2027-03-23 | 2028-01-23 |  |  |
| RHD4CZ8C014RD3100 |  | Supply, lay and Asphaltic base course including Prime Coat (MC1) for 1st Layer - (RD-C-1/4)-Z8-C014-RD | 4d | 2027-03-23 | 2027-03-28 | RHD4PRSHLDOSRD1100, RHD4ENMSASPH2000, RHD4ENMSASPH2010, RHD4PRSHLSTAGRD1100, RHD4CZ8C014RD2100, RHD4CZ8A011RD2100 | -179.02d |
| RHD4CZ8C014RD3200 |  | Supply, lay and Asphaltic base course including Tack Coat (RC2) for 2nd Layer - (RD-C-1/4)-Z8-C014-RD | 4d | 2028-01-18 | 2028-01-23 | RHD4PRSHLDOSRD1100, RHD4PRSHLSTAGRD1100, RHD4CZ8C014ICT5200 | -169.02d |
|  | 7698 | **RHD4-02-002-C014-(RD)-Precast Concrete Curb** |  | 2028-01-23 | 2028-01-29 |  |  |
| RHD4CZ8C014RD5100 |  | Supply and installation Precast Concrete Kerb for Roads - (RD-C-1/4)-Z8-C014-RD | 5d | 2028-01-23 | 2028-01-29 | RHD4PRSHLDOSRD1200, RHD4ENMSRD2000, RHD4ENMSRD2010, RHD4PRSHLSTAGRD1200, RHD4CZ8C014RD3200, RHD4CZ8L04RD5100 | -169.02d |
|  | 7694 | **RHD4-02-002-C014-(RD)-Subgrade** |  | 2027-02-23 | 2027-03-13 |  |  |
| RHD4CZ8C014RD1100 |  | Supply, lay and compaction subgrade compacted thickness 300 mm for Roads - (RD-C-1/4)-Z8-C014-RD | 12d | 2027-02-23 | 2027-03-13 | RHD4ENSDZ8APPEW100, RHD4ENSDZ8APPRD220, RHD4CZ8L04RD1100 SS | -179.02d |
|  | 7695 | **RHD4-02-002-C014-(RD)-Aggregate Base Course** |  | 2027-03-13 | 2027-03-23 |  |  |
| RHD4CZ8C014RD2100 |  | Supply, lay and compaction Aggregate base course compacted thickness 300 mmfor Roads - (RD-C-1/4)-Z8-C014-RD | 9d | 2027-03-13 | 2027-03-23 | RHD4PRSHLDOSRD1000, RHD4PRSHLSTAGRD1000, RHD4CZ8C014RD1100 | -179.02d |
|  | 7701 | **RHD4-02-002-C014-(RD)-Traffic Signage** |  | 2028-01-29 | 2028-02-07 |  |  |
| RHD4CZ8C014RD8100 |  | Installation of Traffic Signage for Road Network - (RD-C-1/4)-Z8-C014-RD | 8d | 2028-01-29 | 2028-02-07 | RHD4PRSHLDOSRD1600, RHD4PRSHLSTAGRD1600, RHD4CZ8C014RD5100, RHD4CZ8L04IRR3203 | -134.02d |
|  | 7699 | **RHD4-02-002-C014-(RD)-Precast Interlocking Block Pavers** |  |  |  |  |  |
|  | 7697 | **RHD4-02-002-C014-(RD)-Bituminous concrete wearing course including tack coat (RC2)** |  | 2028-01-29 | 2028-01-31 |  |  |
| RHD4CZ8C014RD4100 |  | Supply, lay and compaction Asphaltic wearing course including tack Coat (RC2)for Road Network - (RD-C-1/4)-Z8-C014-RD | 2d | 2028-01-29 | 2028-01-31 | RHD4CZ8C014RD5100 | -169.02d |
|  | 7700 | **RHD4-02-002-C014-(RD)-Pavement Marking** |  | 2028-01-31 | 2028-02-05 |  |  |
| RHD4CZ8C014RD7100 |  | Pavement Markings for Road Network - (RD-C-1/4)-Z8-C014-RD | 4d | 2028-01-31 | 2028-02-05 | RHD4PRSHLDOSRD1500, RHD4PRSHLSTAGRD1500, RHD4CZ8C014RD4100, RHD4CZ8L04RD7100 | -169.02d |
|  | 7240 | **RHD4-02-002-Z8-C014-Irrigation Network - IRR** |  | 2027-06-23 | 2027-07-18 |  |  |
|  | 8188 | **RHD4-02-002-C014-(IRR)-HDPE Pipes - 180 mm diameter** |  | 2027-06-23 | 2027-07-17 |  |  |
| RHD4CZ8C014IRR1101 |  | Excavation works for HDPE Pipline 180 mm - (RD-C-1/4)-Z8-C014-IRR | 5d | 2027-06-23 | 2027-06-29 | RHD4CZ8C014RW3000, RHD4CZ8A011IRR1100 | -143.02d |
| RHD4CZ8C014IRR1201 |  | Bedding works for HDPE Pipline 180 mm - (RD-C-1/4)-Z8-C014-IRR | 4d | 2027-06-29 | 2027-07-04 | RHD4CZ8C014IRR1101 | -142.02d |
| RHD4CZ8C014IRR1301 |  | Installing for HDPE Pipline 180 mm - (RD-C-1/4)-Z8-C014-IRR | 5d | 2027-07-04 | 2027-07-10 | RHD4CZ8C014IRR1201 | -142.02d |
| RHD4CZ8C014IRR1401 |  | Primary Test for HDPE Pipline 180 mm - (RD-C-1/4)-Z8-C014-IRR | 2d | 2027-07-10 | 2027-07-12 | RHD4CZ8C014IRR1301 | -142.02d |
| RHD4CZ8C014IRR1501 |  | Backfilling and warning tape works for HDPE Pipline 180 mm - (RD-C-1/4)-Z8-C014-IRR | 4d | 2027-07-12 | 2027-07-17 | RHD4CZ8C014IRR1401 | -142.02d |

| ID | WBS | Task | Duration | Start | Finish | Predecessors | Total float |
| --- | --- | --- | --- | --- | --- | --- | --- |
|  | 6685 | **RHD4-02-002-C014-(IRR)-Wash out Chamber** |  | 2027-07-06 | 2027-07-15 |  |  |
| RHD4CZ8C014IRR2101 |  | Excavation and Bedding for Wash out Chamber for Irrigation Network - (RD-C-1/4)-Z8-C014-IRR | 2d | 2027-07-06 | 2027-07-08 | RHD4CZ8C014IRR1300 | -143.02d |
| RHD4CZ8C014IRR2201 |  | PC works for Wash out Chamber for Irrigation Network - (RD-C-1/4)-Z8-C014-IRR | 2d | 2027-07-08 | 2027-07-11 | RHD4CZ8C014IRR2101 | -143.02d |
| RHD4CZ8C014IRR2301 |  | Installation for Wash out Chamber for Irrigation Network - (RD-C-1/4)-Z8-C014-IRR | 2d | 2027-07-11 | 2027-07-13 | RHD4CZ8C014IRR2201 | -143.02d |
| RHD4CZ8C014IRR2401 |  | Backfilling works for Wash out Chamber for Irrigation Network - (RD-C-1/4)-Z8-C014-IRR | 2d | 2027-07-13 | 2027-07-15 | RHD4CZ8C014IRR2301 | -143.02d |
|  | 6686 | **RHD4-02-002-C014-(IRR)-Wash out Valves** |  | 2027-07-13 | 2027-07-18 |  |  |
| RHD4CZ8C014IRR3102 |  | Installation for Wash out Valve for Irrigation Network - (RD-C-1/4)-Z8-C014-IRR | 2d | 2027-07-13 | 2027-07-15 | RHD4CZ8C014IRR2301 | -143.02d |
| RHD4CZ8C014IRR3202 |  | Stem and Service box for Wash out Valve for Irrigation Network - (RD-C-1/4)-Z8-C014-IRR | 2d | 2027-07-15 | 2027-07-18 | RHD4CZ8C014IRR3102, RHD4CZ8C014IRR2401 | -143.02d |
|  | 6107 | **RHD4-02-002-C014-(IRR)-HDPE Pipes - 160 mm diameter** |  | 2027-06-29 | 2027-07-11 |  |  |
| RHD4CZ8C014IRR1100 |  | Excavation works for HDPE Pipline 160 mm - (RD-C-1/4)-Z8-C014-IRR | 2d | 2027-06-29 | 2027-07-01 | RHD4CZ8C014IRR1101 | -143.02d |
| RHD4CZ8C014IRR1200 |  | Bedding works for HDPE Pipline 160 mm - (RD-C-1/4)-Z8-C014-IRR | 2d | 2027-07-01 | 2027-07-04 | RHD4CZ8C014IRR1100 | -143.02d |
| RHD4CZ8C014IRR1300 |  | Installing for HDPE Pipline 160 mm - (RD-C-1/4)-Z8-C014-IRR | 2d | 2027-07-04 | 2027-07-06 | RHD4CZ8C014IRR1200 | -143.02d |
| RHD4CZ8C014IRR1400 |  | Primary Test for HDPE Pipline 160 mm - (RD-C-1/4)-Z8-C014-IRR | 2d | 2027-07-06 | 2027-07-08 | RHD4CZ8C014IRR1300 | -142.02d |
| RHD4CZ8C014IRR1500 |  | Backfilling and warning tape works for HDPE Pipline 160 mm - (RD-C-1/4)-Z8-C014-IRR | 2d | 2027-07-08 | 2027-07-11 | RHD4CZ8C014IRR1400 | -142.02d |
|  | 6115 | **RHD4-02-002-C014-(IRR)-Gate Valves (Direct Buried)** |  | 2027-07-04 | 2027-07-13 |  |  |
| RHD4CZ8C014IRR3100 |  | Installation for Direct Buried Gate Valves - (RD-C-1/4)-Z8-C014-IRR | 2d | 2027-07-04 | 2027-07-06 | RHD4CZ8C014IRR1300 SS, RHD4CZ8C014IRR1300 FF | -138.02d |
| RHD4CZ8C014IRR3200 |  | Stem and Service box for Direct Buried Gate Valves - (RD-C-1/4)-Z8-C014-IRR | 2d | 2027-07-11 | 2027-07-13 | RHD4CZ8C014IRR3100, RHD4CZ8C014IRR1500 | -142.02d |
|  | 7653 | **RHD4-02-002-Z8-C014-Medium Voltage Network - MV** |  | 2027-07-03 | 2027-07-29 |  |  |
|  | 7654 | **RHD4-02-002-C014-(MV)-Medium Voltage cable trench** |  | 2027-07-03 | 2027-07-12 |  |  |
| RHD4CZ8C014MV1100 |  | Excavation for Medium Voltage Trench - (RD-C-1/4)-Z8-C014-MV | 3d | 2027-07-03 | 2027-07-06 | RHD4ENSDZ8APPMV150, RHD4CZ8C014RD3100, RHD4CZ8L04MV1100 | -146.02d |
| RHD4CZ8C014MV1200 |  | Trench Backfilling for Medium Voltage Network - (RD-C-1/4)-Z8-C014-MV | 3d | 2027-07-08 | 2027-07-12 | RHD4CZ8C014MV3101 | -146.02d |
|  | 7656 | **RHD4-02-002-C014-(MV)-Medium Voltage cables 3Cx 500 mm²** |  | 2027-07-06 | 2027-07-29 |  |  |
| RHD4CZ8C014MV3100 |  | Installation of Medium Voltage Cables 3Cx 500 mm² - (RD-C-1/4)-Z8-C014-MV | 6d | 2027-07-06 | 2027-07-13 | RHD4PRSHLDOSMV1100, RHD4ENMSMV2000, RHD4ENMSMV2010, RHD4PRSHLSTAGMV1100, RHD4CZ8C014MV1100 | -138.02d |
| RHD4CZ8C014MV3200 |  | Joints Installation of Medium Voltage Cables 3Cx 500 mm² - (RD-C-1/4)-Z8-C014-MV | 2d | 2027-07-13 | 2027-07-15 | RHD4PRSHLDOSMV1300, RHD4PRSHLSTAGMV1300, RHD4CZ8C014MV3100 | -138.02d |
| RHD4CZ8C014MV3300 |  | Testing of Medium Voltage Cables 3Cx 500 mm² - (RD-C-1/4)-Z8-C014-MV | 2d | 2027-07-15 | 2027-07-18 | RHD4CZ8C014MV3200, RHD4CZ8C014MV1200 | -138.02d |
| RHD4CZ8C014MV3400 |  | Termination of Medium Voltage Cables 3Cx 500 mm² - (RD-C-1/4)-Z8-C014-MV | 2d | 2027-07-27 | 2027-07-29 | RHD4CZ8C014MV3300, RHD4CZ8C014MV5400 | -146.02d |
|  | 7657 | **RHD4-02-002-C014-(MV)-Medium Voltage cables 3Cx 50 mm²** |  | 2027-07-06 | 2027-07-29 |  |  |
| RHD4CZ8C014MV3101 |  | Installation of Medium Voltage Cables 3Cx 50 mm² - (RD-C-1/4)-Z8-C014-MV | 2d | 2027-07-06 | 2027-07-08 | RHD4PRSHLDOSMV1200, RHD4ENMSMV2000, RHD4ENMSMV2010, RHD4PRSHLSTAGMV1200, RHD4CZ8C014MV1100 | -146.02d |
| RHD4CZ8C014MV3301 |  | Testing of Medium Voltage Cables 3Cx 50 mm² - (RD-C-1/4)-Z8-C014-MV | 2d | 2027-07-12 | 2027-07-14 | RHD4CZ8C014MV3101, RHD4CZ8C014MV1200 | -135.02d |
| RHD4CZ8C014MV3401 |  | Termination of Medium Voltage Cables 3Cx 50 mm² - (RD-C-1/4)-Z8-C014-MV | 2d | 2027-07-27 | 2027-07-29 | RHD4CZ8C014MV3301, RHD4CZ8C014MV5400 | -146.02d |
|  | 7659 | **RHD4-02-002-C014-(MV)-Unit Substations** |  | 2027-07-12 | 2027-07-27 |  |  |
| RHD4CZ8C014MV5100 |  | Excavation for Unit Substations for Medium Voltage Network - (RD-C-1/4)-Z8-C014-MV | 2d | 2027-07-12 | 2027-07-14 | RHD4ENSDZ8APPMV150, RHD4CZ8C014MV1200 | -146.02d |
| RHD4CZ8C014MV5200 |  | Concrete Base Placement for Unit Substations for Medium Voltage Network - (RD-C-1/4)-Z8-C014-MV | 2d | 2027-07-14 | 2027-07-17 | RHD4CZ8C014MV5100 | -146.02d |
| RHD4CZ8C014MV5300 |  | Installation for Fences and doors for Medium Voltage Network - (RD-C-1/4)-Z8-C014-MV | 5d | 2027-07-17 | 2027-07-22 | RHD4CZ8C014MV5200 | -146.02d |
| RHD4CZ8C014MV5400 |  | Installation for Unit Substations for Medium Voltage Network - (RD-C-1/4)-Z8-C014-MV | 4d | 2027-07-22 | 2027-07-27 | RHD4PRLOLSTAGMV1601, RHD4PRLOLSTAGMV1602, RHD4CZ8C014MV5300 | -146.02d |
|  | 7660 | **RHD4-02-002-Z8-C014-Low Voltage Network - LV** |  | 2027-07-29 | 2027-08-15 |  |  |
|  | 7663 | **RHD4-02-002-C014-(LV)-Low Voltage cables** |  | 2027-07-29 | 2027-08-08 |  |  |
| RHD4CZ8C014LV3100 |  | Excavation for Low Voltage Cables for Low Voltage Network - (RD-C-1/4)-Z8-C014-LV | 2d | 2027-07-29 | 2027-08-01 | RHD4ENSDZ8APPLV160, RHD4CZ8C014MV1200, RHD4CZ8C014MV3401, RHD4CZ8C014MV3400 | -146.02d |
| RHD4CZ8C014LV3200 |  | Cable Laying of Low Voltage Cables for Low Voltage Network - (RD-C-1/4)-Z8-C014-LV | 2d | 2027-08-01 | 2027-08-03 | RHD4PRSHLDOSLV1100, RHD4ENMSLV2000, RHD4ENMSLV2010, RHD4PRSHLSTAGLV1100, RHD4CZ8C014LV3100 | -146.02d |
| RHD4CZ8C014LV3300 |  | Warning tape and Backfill for Low Voltage Cables for Low Voltage Network - (RD-C-1/4)-Z8-C014-LV | 2d | 2027-08-03 | 2027-08-05 | RHD4CZ8C014LV3200 | -146.02d |
| RHD4CZ8C014LV3400 |  | Testing of Low Voltage Cables for Low Voltage Network - (RD-C-1/4)-Z8-C014-LV | 2d | 2027-08-05 | 2027-08-08 | RHD4CZ8C014LV3300 | -146.02d |
|  | 7664 | **RHD4-02-002-C014-(LV)-Low Voltage Distribution Pillars** |  | 2027-08-08 | 2027-08-15 |  |  |
| RHD4CZ8C014LV4100 |  | Leveling for Distribution Pillars for Low Voltage Network - (RD-C-1/4)-Z8-C014-LV | 2d | 2027-08-08 | 2027-08-10 | RHD4CZ8C014LV3400 | -146.02d |
| RHD4CZ8C014LV4200 |  | Lean Concrete for Distribution Pillars for Low Voltage Network - (RD-C-1/4)-Z8-C014-LV | 2d | 2027-08-10 | 2027-08-12 | RHD4CZ8C014LV4100 | -146.02d |
| RHD4CZ8C014LV4300 |  | Installation of Distribution Pillars for Low Voltage Network - (RD-C-1/4)-Z8-C014-LV | 2d | 2027-08-12 | 2027-08-15 | RHD4PRSHLDOSLV1200, RHD4PRSHLDOSLV1300, RHD4PRSHLSTAGLV1200, RHD4PRSHLSTAGLV1300, RHD4CZ8C014LV4200 | -146.02d |
|  | 7665 | **RHD4-02-002-C014-(LV)-Low Voltage Distribution Pillars Earthing** |  |  |  |  |  |
|  | 7666 | **RHD4-02-002-Z8-C014-Street Lighting Network - SL** |  | 2027-07-11 | 2027-10-06 |  |  |
|  | 7667 | **RHD4-02-002-C014-(SL)-Street Lighting duct banks** |  | 2027-07-11 | 2027-07-20 |  |  |
| RHD4CZ8C014SL2100 |  | Excavation of Duct Banks for Street Lighting Network - (RD-C-1/4)-Z8-C014-SL | 2d | 2027-07-11 | 2027-07-13 | RHD4ENSDZ8APPSL170, RHD4CZ8C014RW3000, RHD4CZ8C014IRR1100, RHD4CZ8C014IRR1500 | -140.02d |
| RHD4CZ8C014SL2200 |  | Installation of Duct Banks for Street Lighting Network - (RD-C-1/4)-Z8-C014-SL | 2d | 2027-07-13 | 2027-07-15 | RHD4PRSHLDOSSL1000, RHD4PRSHLSTAGSL1000, RHD4CZ8C014SL2100 | -140.02d |
| RHD4CZ8C014SL2300 |  | Pouring of Duct Banks for Street Lighting Network - (RD-C-1/4)-Z8-C014-SL | 2d | 2027-07-15 | 2027-07-18 | RHD4CZ8C014SL2200 | -140.02d |
| RHD4CZ8C014SL2400 |  | Backfilling of Duct Banks for Street Lighting Network - (RD-C-1/4)-Z8-C014-SL | 2d | 2027-07-18 | 2027-07-20 | RHD4CZ8C014SL2300 | -140.02d |
|  | 7668 | **RHD4-02-002-C014-(SL)-Street Lighting Drawpit** |  | 2027-08-15 | 2027-08-19 |  |  |
| RHD4CZ8C014SL5100 |  | Excavation of Drawpit size 600x600x900mm for Street Lighting Network - (RD-C-1/4)-Z8-C014-SL | 2d | 2027-08-15 | 2027-08-17 | RHD4ENSDZ8APPSL170, RHD4CZ8C014SL2300, RHD4CZ8C014LV4300 | -146.02d |
| RHD4CZ8C014SL5200 |  | Installation of Drawpit size 600x600x900mm for Street Lighting Network - (RD-C-1/4)-Z8-C014-SL | 2d | 2027-08-17 | 2027-08-19 | RHD4PRSHLDOSSL1400, RHD4PRSHLSTAGSL1400, RHD4CZ8C014SL5100 | -146.02d |
|  | 7669 | **RHD4-02-002-C014-(SL)-Street Lighting cables** |  | 2027-08-19 | 2027-09-05 |  |  |
| RHD4CZ8C014SL3100 |  | Excavation for Street Lighting Cables for Street Lighting Network - (RD-C-1/4)-Z8-C014-SL | 4d | 2027-08-19 | 2027-08-24 | RHD4ENSDZ8APPSL170, RHD4CZ8C014SL5200 | -146.02d |
| RHD4CZ8C014SL3200 |  | Cable Laying of Street Lighting Cables for Street Lighting Network - (RD-C-1/4)-Z8-C014-SL | 4d | 2027-08-24 | 2027-08-29 | RHD4PRSHLDOSSL1100, RHD4ENMSSL2000, RHD4ENMSSL2010, RHD4PRSHLSTAGSL1100, RHD4CZ8C014SL3100 | -146.02d |
| RHD4CZ8C014SL3300 |  | Warning tape and Backfill for Street Lighting Cables for Street Lighting Network - (RD-C-1/4)-Z8-C014-SL | 4d | 2027-08-29 | 2027-09-02 | RHD4CZ8C014SL3200 | -146.02d |
| RHD4CZ8C014SL3400 |  | Testing of Street Lighting Cables for Street Lighting Network - (RD-C-1/4)-Z8-C014-SL | 2d | 2027-09-02 | 2027-09-05 | RHD4CZ8C014SL3300 | -146.02d |
|  | 7670 | **RHD4-02-002-C014-(SL)-Street Lighting Poles** |  | 2027-09-05 | 2027-09-27 |  |  |
| RHD4CZ8C014SL1100 |  | Excavation for RC Base for Lighting Poles for Street Lighting Network - (RD-C-1/4)-Z8-C014-SL | 3d | 2027-09-05 | 2027-09-08 | RHD4ENSDZ8APPSL170, RHD4CZ8C014SL3400 | -146.02d |
| RHD4CZ8C014SL1200 |  | Installation for RC Base for Lighting Poles for Street Lighting Network - (RD-C-1/4)-Z8-C014-SL | 3d | 2027-09-08 | 2027-09-12 | RHD4CZ8C014SL1100 | -146.02d |
| RHD4CZ8C014SL1300 |  | Backfill for RC Base for Lighting Poles for Street Lighting Network - (RD-C-1/4)-Z8-C014-SL | 3d | 2027-09-12 | 2027-09-15 | RHD4CZ8C014SL1200 | -146.02d |
| RHD4CZ8C014SL1400 |  | Installation for Lighting Poles for Street Lighting Network - (RD-C-1/4)-Z8-C014-SL | 4d | 2027-09-15 | 2027-09-20 | RHD4PRSHLDOSSL1200, RHD4ENMSSL2000, RHD4ENMSSL2010, RHD4PRSHLSTAGSL1200, RHD4CZ8C014SL1300, RHD4CZ8C014SL3400 | -146.02d |
| RHD4CZ8C014SL1500 |  | Luminaire Installation for Lighting Poles for Street Lighting Network - (RD-C-1/4)-Z8-C014-SL | 5d | 2027-09-20 | 2027-09-27 | RHD4PRSHLDOSSL1300, RHD4PRSHLSTAGSL1300, RHD4CZ8C014SL1400 | -146.02d |
|  | 7671 | **RHD4-02-002-C014-(SL)-Street Lighting Feeder Pillars** |  | 2027-09-27 | 2027-10-04 |  |  |
| RHD4CZ8C014SL4100 |  | Leveling for Distribution Pillars for Street Lighting Network - (RD-C-1/4)-Z8-C014-SL | 2d | 2027-09-27 | 2027-09-29 | RHD4CZ8C014SL1500 | -146.02d |
| RHD4CZ8C014SL4200 |  | Lean Concrete for Distribution Pillars for Street Lighting Network - (RD-C-1/4)-Z8-C014-SL | 2d | 2027-09-29 | 2027-10-02 | RHD4CZ8C014SL4100 | -146.02d |
| RHD4CZ8C014SL4300 |  | Installation of Distribution Pillars for Street Lighting Network - (RD-C-1/4)-Z8-C014-SL | 2d | 2027-10-02 | 2027-10-04 | RHD4CZ8C014SL4200, RHD4CZ8C014SL1400 | -146.02d |

| ID | WBS | Task | Duration | Start | Finish | Predecessors | Complete | Total float |
| --- | --- | --- | --- | --- | --- | --- | --- | --- |
|  | 7672 | **RHD4-02-002-C014-(SL)-Street Lighting Earthing System** |  | 2027-10-04 | 2027-10-06 |  |  |  |
| RHD4CZ8C014SL6100 |  | Installation of Earthing for Lighting Poles and Fedder Pillers for Street Lighting Network - (RD-C-1/4)-Z8-C014-SL | 2d | 2027-10-04 | 2027-10-06 | RHD4ENMSER2000, RHD4ENMSER2010, RHD4CZ8C014SL4300 |  | -146.02d |
|  | 7678 | **RHD4-02-002-Z8-C014-Telecommunications Network - TC** |  | 2027-10-06 | 2027-12-01 |  |  |  |
|  | 7679 | **RHD4-02-002-C014-(TC)-Telecommunications Ducts** |  | 2027-10-06 | 2027-11-27 |  |  |  |
| RHD4CZ8C014TC2100 |  | Excavation of HDPE Ducts for Telecom Network - (RD-C-1/4)-Z8-C014-TC | 6d | 2027-10-06 | 2027-10-13 | RHD4ENSDZ8APPTC190, RHD4CZ8C014SL6100 |  | -146.02d |
| RHD4CZ8C014TC2200 |  | Installation of HDPE Ducts for Telecom Network - (RD-C-1/4)-Z8-C014-TC | 9d | 2027-10-13 | 2027-10-24 | RHD4PRSHLDOSTC1000, RHD4PRSHLSTAGTC1000, RHD4CZ8C014TC2100 |  | -146.02d |
| RHD4CZ8C014TC2400 |  | Backfilling of HDPE Ducts for Telecom Network - (RD-C-1/4)-Z8-C014-TC | 6d | 2027-11-20 | 2027-11-27 | RHD4CZ8C014TC2200, RHD4CZ4C012RD8100, RHD4CZ4L01CCTV6100 |  | -169.02d |
|  | 7680 | **RHD4-02-002-C014-(TC)-Telecommunications Manholes** |  | 2027-11-27 | 2027-12-01 |  |  |  |
| RHD4CZ8C014TC5100 |  | Excavation for Manholes for Telecom Network - (RD-C-1/4)-Z8-C014-TC | 2d | 2027-11-27 | 2027-11-29 | RHD4ENSDZ8APPTC190, RHD4CZ8C014TC2400 |  | -169.02d |
| RHD4CZ8C014TC5200 |  | Installation of Manholes for Telecom Network - (RD-C-1/4)-Z8-C014-TC | 2d | 2027-11-29 | 2027-12-01 | RHD4PRSHLDOSTC1200, RHD4PRSHLSTAGTC1200, RHD4CZ8C014TC5100 |  | -169.02d |
|  | 7682 | **RHD4-02-002-Z8-C014-Information and Communication Technologies - ICT** |  | 2027-12-01 | 2028-01-18 |  |  |  |
|  | 7683 | **RHD4-02-002-C014-(ICT)-Information and Communication Technologies Ducts** |  | 2027-12-01 | 2028-01-11 |  |  |  |
| RHD4CZ8C014ICT2100 |  | Excavation of HDPE Ducts for ICT Network - (RD-C-1/4)-Z8-C014-ICT | 10d | 2027-12-01 | 2027-12-13 | RHD4ENSDZ8APPICT200, RHD4CZ8C014IRR1100, RHD4CZ8C014TC5200 |  | -169.02d |
| RHD4CZ8C014ICT2200 |  | Installation of HDPE Ducts for ICT Network - (RD-C-1/4)-Z8-C014-ICT | 15d | 2027-12-13 | 2027-12-30 | RHD4PRSHLDOSICT1000, RHD4PRSHLSTAGICT1000, RHD4CZ8C014ICT2100 |  | -169.02d |
| RHD4CZ8C014ICT2400 |  | Backfilling of HDPE Ducts for ICT Network - (RD-C-1/4)-Z8-C014-ICT | 10d | 2027-12-30 | 2028-01-11 | RHD4CZ8C014ICT2200 |  | -169.02d |
|  | 7684 | **RHD4-02-002-C014-(ICT)-Information and Communication Technologies Manholes** |  | 2028-01-11 | 2028-01-18 |  |  |  |
| RHD4CZ8C014ICT5100 |  | Excavation for Manholes for ICT Network - (RD-C-1/4)-Z8-C014-ICT | 3d | 2028-01-11 | 2028-01-15 | RHD4ENSDZ8APPICT200, RHD4CZ8C014ICT2100, RHD4CZ8C014ICT2400 |  | -169.02d |
| RHD4CZ8C014ICT5200 |  | Installation of Manholes for ICT Network - (RD-C-1/4)-Z8-C014-ICT | 3d | 2028-01-15 | 2028-01-18 | RHD4PRSHLDOSICT1200, RHD4PRSHLSTAGICT1200, RHD4CZ8C014ICT5100 |  | -169.02d |
|  | 7673 | **RHD4-02-002-Z8-C014-Landscape Network - LS** |  |  |  |  |  |  |
|  | 7674 | **RHD4-02-002-C014-(LS)-Landscape Lighting cables** |  |  |  |  |  |  |
|  | 7676 | **RHD4-02-002-C014-(LS)-Landscape Bollard Poles** |  |  |  |  |  |  |
|  | 7686 | **RHD4-02-002-Z8-C014-Security Network - CCTV** |  |  |  |  |  |  |
|  | 7687 | **RHD4-02-002-C014-(CCTV)-Civil Works** |  |  |  |  |  |  |
|  | 8459 | **RHD4-02-002-Z9** |  | 2026-08-04 | 2028-08-28 |  |  |  |
|  | 8649 | **RHD4-02-002-Z9-C071** |  | 2026-08-04 | 2028-08-28 |  |  |  |
|  | 8680 | **RHD4-02-002-Z9-C071-Crossings Sewage Network - SWCr** |  |  |  |  |  |  |
|  | 8693 | **RHD4-02-002-C071-(SWCr)-MH Works - 1500 mm diameter with Back drop** |  |  |  |  |  |  |
|  | 8692 | **RHD4-02-002-C071-(SWCr)-MH Works - 1500 mm diameter** |  |  |  |  |  |  |
|  | 8690 | **RHD4-02-002-C071-(SWCr)-MH Works - 1200 mm diameter** |  |  |  |  |  |  |
|  | 8685 | **RHD4-02-002-C071-(SWCr)-GRP Pipes - 700 mm diameter** |  |  |  |  |  |  |
|  | 8686 | **RHD4-02-002-C071-(SWCr)-UPVC Pipes - 200 mm diameter** |  |  |  |  |  |  |
|  | 8724 | **RHD4-02-002-Z9-C071-Crossings Potable Network - PTCr** |  |  |  |  |  |  |
|  | 8727 | **RHD4-02-002-C071-(PTCr)-HDPE Pipes - 200 mm diameter** |  |  |  |  |  |  |
|  | 8726 | **RHD4-02-002-C071-(PTCr)-HDPE Pipes - 160 mm diameter** |  |  |  |  |  |  |
|  | 8737 | **RHD4-02-002-C071-(PTCr)-Fire Hydrant** |  |  |  |  |  |  |
|  | 8771 | **RHD4-02-002-Z9-C071-Crossings Irrigation Network - IRRC** |  |  |  |  |  |  |
|  | 8772 | **RHD4-02-002-C071-(IRRC)-HDPE Pipes - 160 mm diameter** |  |  |  |  |  |  |
|  | 8779 | **RHD4-02-002-C071-(IRRC)-HDPE Pipes - 500 mm diameter** |  |  |  |  |  |  |
|  | 8780 | **RHD4-02-002-C071-(IRRC)-Gate Valves (Direct Buried)** |  |  |  |  |  |  |
|  | 8781 | **RHD4-02-002-C071-(IRRC)-Butterfly Valve Chamber** |  |  |  |  |  |  |
|  | 8782 | **RHD4-02-002-C071-(IRRC)-Butterfly Valves** |  |  |  |  |  |  |
|  | 8828 | **RHD4-02-002-Z9-C071-Road Works - RD** |  | 2027-03-21 | 2028-08-28 |  |  |  |
|  | 8829 | **RHD4-02-002-C071-(RD)-Subgrade** |  | 2027-03-21 | 2027-04-04 |  |  |  |
| RHD4CZ9C071RD1100 |  | Supply, lay and compaction subgrade compacted thickness 300 mm for Roads - (RD-C-7/1)-Z9-C071-RD | 13d | 2027-03-21 | 2027-04-04 | RHD4ENSDZ9APPEW100, RHD4ENSDZ9APPRD220, RHD4CZ9C071TC3400, RHD4CZ9C071ICT3400, RHD4CZ9C071TC3400 FF, RHD4CZ9C071ICT3400 FF |  | -196d |
|  | 8830 | **RHD4-02-002-C071-(RD)-Aggregate Base Course** |  | 2027-04-05 | 2027-04-15 |  |  |  |
| RHD4CZ9C071RD2100 |  | Supply, lay and compaction Aggregate base course compacted thickness 300 mmfor Roads - (RD-C-7/1)-Z9-C071-RD | 10d | 2027-04-05 | 2027-04-15 | RHD4PRSHLDOSRD1000, RHD4PRSHLSTAGRD1000, RHD4CZ9C071RD1100 |  | -196d |
|  | 8831 | **RHD4-02-002-C071-(RD)-Bituminous base course Two Layers, including (MC1)&(RC2)** |  | 2027-04-17 | 2028-08-06 |  |  |  |
| RHD4CZ9C071RD3100 |  | Supply, lay and Asphaltic base course including Prime Coat (MC1) for 1st Layer - (RD-C-7/1)-Z9-C071-RD | 4d | 2027-04-17 | 2027-04-20 | RHD4PRSHLDOSRD1100, RHD4ENMSASPH2000, RHD4ENMSASPH2010, RHD4PRSHLSTAGRD1100, RHD4CZ9C071RD2100, RHD4CZ7RA05RD3100, RHD4CZ4RA02RD3100, RHD4CZ8RA04RD3100, RHD4CZ8C014RD3100 |  | -196d |
| RHD4CZ9C071RD3200 |  | Supply, lay and Asphaltic base course including Tack Coat (RC2) for 2nd Layer - (RD-C-7/1)-Z9-C071-RD | 4d | 2028-08-02 | 2028-08-06 | RHD4PRSHLDOSRD1100, RHD4PRSHLSTAGRD1100, RHD4CZ9C071CCTV6100 |  | -173d |
|  | 8833 | **RHD4-02-002-C071-(RD)-Precast Concrete Curb** |  | 2028-08-07 | 2028-08-14 |  |  |  |
| RHD4CZ9C071RD5100 |  | Supply and installation Precast Concrete Kerb for Roads - (RD-C-7/1)-Z9-C071-RD | 7d | 2028-08-07 | 2028-08-14 | RHD4PRSHLDOSRD1200, RHD4ENMSRD2000, RHD4ENMSRD2010, RHD4PRSHLSTAGRD1200, RHD4CZ9C071RD3200 |  | -173d |
|  | 8836 | **RHD4-02-002-C071-(RD)-Traffic Signage** |  | 2028-08-15 | 2028-08-22 |  |  |  |
| RHD4CZ9C071RD8100 |  | Installation of Traffic Signage for Road Network - (RD-C-7/1)-Z9-C071-RD | 7d | 2028-08-15 | 2028-08-22 | RHD4PRSHLDOSRD1600, RHD4PRSHLSTAGRD1600, RHD4CZ9C071RD5100 |  | -173d |
|  | 8834 | **RHD4-02-002-C071-(RD)-Precast Interlocking Block Pavers** |  |  |  |  |  |  |
|  | 8832 | **RHD4-02-002-C071-(RD)-Bituminous concrete wearing course including tack coat (RC2)** |  | 2028-08-23 | 2028-08-24 |  |  |  |
| RHD4CZ9C071RD4100 |  | Supply, lay and compaction Asphaltic wearing course including tack Coat (RC2)for Road Network - (RD-C-7/1)-Z9-C071-RD | 2d | 2028-08-23 | 2028-08-24 | RHD4CZ9C071RD5100, RHD4CZ9C071RD8100 |  | -173d |
|  | 8837 | **RHD4-02-002-C071-(RD)-Speed Table and Wheel Stopper** |  |  |  |  |  |  |
|  | 8835 | **RHD4-02-002-C071-(RD)-Pavement Marking** |  | 2028-08-26 | 2028-08-28 |  |  |  |
| RHD4CZ9C071RD7100 |  | Pavement Markings for Road Network - (RD-C-7/1)-Z9-C071-RD | 3d | 2028-08-26 | 2028-08-28 | RHD4PRSHLDOSRD1500, RHD4PRSHLSTAGRD1500, RHD4CZ9C071RD4100 |  | -173d |
|  | 8653 | **RHD4-02-002-Z9-C071-Storm Network - ST** |  | 2026-08-04 | 2027-03-31 |  |  |  |
|  | 8672 | **RHD4-02-002-C071-(ST)-MH Works - 2000 mm diameter** |  | 2026-08-29 | 2027-03-31 |  |  |  |
| RHD4CZ9C071ST3102 |  | Excavation and PC Blinding works for MH 2000 mm - (RD-C-7/1)-Z9-C071-ST | 5d | 2026-08-29 A | 2026-09-02 A | RHD4ENSDZ9APPST110, RHD4ENMSST2000, RHD4CZ9C071ST2100 | 100% |  |
| RHD4CZ9C071ST3202 |  | Installation of Base for MH 2000 mm - (RD-C-7/1)-Z9-C071-ST | 6d | 2026-09-16 A | 2026-09-22 A | RHD4PRSHLSTAGST1608, RHD4CZ9C071ST3102 | 100% |  |
| RHD4CZ9C071ST3302 |  | MH Ring and C.Slab works and Backfilling works for MH 2000 mm - (RD-C-7/1)-Z9-C071-ST | 6d | 2027-03-14 | 2027-03-21 | RHD4PRSHLDOSST1608, RHD4CZ9C071ST3202 |  | -83.02d |
| RHD4CZ9C071ST3402 |  | Steel Cover for MH 2000 mm - (RD-C-7/1)-Z9-C071-ST | 4d | 2027-03-21 | 2027-03-25 | RHD4PRSHLDOSST1708, RHD4PRSHLSTAGST1708, RHD4CZ9C071ST3302 |  | -83.02d |
| RHD4CZ9C071ST3502 |  | Finishing, Benching, Testing works for MH 2000 mm - (RD-C-7/1)-Z9-C071-ST | 5d | 2027-03-25 | 2027-03-31 | RHD4CZ9C071ST3402 |  | -83.02d |
|  | 8670 | **RHD4-02-002-C071-(ST)-MH Works - 1200 mm diameter** |  | 2026-09-12 | 2027-03-29 |  |  |  |
| RHD4CZ9C071ST3100 |  | Excavation and PC Blinding works for MH 1200 mm - (RD-C-7/1)-Z9-C071-ST | 4d | 2026-09-12 A | 2026-09-15 A | RHD4ENSDZ9APPST110, RHD4ENMSST2000, RHD4ENMSST2010, RHD4CZ9C071ST3101 | 100% |  |
| RHD4CZ9C071ST3200 |  | Installation of Base for MH 1200 mm - (RD-C-7/1)-Z9-C071-ST | 5d | 2026-09-20 A | 2026-09-26 A | RHD4PRSHLSTAGST1608, RHD4CZ9C071ST3100 | 100% |  |
| RHD4CZ9C071ST3300 |  | MH Ring and C.Slab works and Backfilling works for MH 1200 mm - (RD-C-7/1)-Z9-C071-ST | 5d | 2027-03-14 | 2027-03-20 | RHD4PRSHLDOSST1608, RHD4CZ9C071ST3200 |  | -111.02d |

| ID | WBS | Task | Duration | Start | Finish | Predecessors | Complete | Total float |
| --- | --- | --- | --- | --- | --- | --- | --- | --- |
| RHD4CZ9C071ST3400 |  | Steel Cover for MH 1200 mm - (RD-C-7/1)-Z9-C071-ST | 4d | 2027-03-20 | 2027-03-24 | RHD4PRSHLDOSST1708, RHD4PRSHLSTAGST1708, RHD4CZ9C071ST3300 |  | -78.02d |
| RHD4CZ9C071ST3500 |  | Finishing, Benching, Testing works for MH 1200 mm - (RD-C-7/1)-Z9-C071-ST | 4d | 2027-03-24 | 2027-03-29 | RHD4CZ9C071ST3400 |  | -78.02d |
|  | 8671 | **RHD4-02-002-C071-(ST)-MH Works - 1500 mm diameter** |  | 2026-08-04 | 2027-03-25 |  |  |  |
| RHD4CZ9C071ST3101 |  | Excavation and PC Blinding works for MH 1500 mm - (RD-C-7/1)-Z9-C071-ST | 4d | 2026-08-04 A | 2026-08-06 A | RHD4ENSDZ9APPST110, RHD4ENMSST2000, RHD4CZ9C071ST3102 | 100% |  |
| RHD4CZ9C071ST3201 |  | Installation of Base for MH 1500 mm - (RD-C-7/1)-Z9-C071-ST | 4d | 2026-09-29 A | 2026-10-03 A | RHD4PRSHLSTAGST1608, RHD4CZ9C071ST3101 | 100% |  |
| RHD4CZ9C071ST3301 |  | MH Ring and C.Slab works and Backfilling works for MH 1500 mm - (RD-C-7/1)-Z9-C071-ST | 4d | 2027-03-14 | 2027-03-18 | RHD4PRSHLDOSST1608, RHD4CZ9C071ST3201 |  | -110.02d |
| RHD4CZ9C071ST3401 |  | Steel Cover for MH 1500 mm - (RD-C-7/1)-Z9-C071-ST | 2d | 2027-03-18 | 2027-03-21 | RHD4PRSHLDOSST1708, RHD4PRSHLSTAGST1708, RHD4CZ9C071ST3301 |  | -81.02d |
| RHD4CZ9C071ST3501 |  | Finishing, Benching, Testing works for MH 1500 mm - (RD-C-7/1)-Z9-C071-ST | 4d | 2027-03-21 | 2027-03-25 | RHD4CZ9C071ST3401 |  | -81.02d |
|  | 8661 | **RHD4-02-002-C071-(ST)-GRP Pipes - 1100 mm diameter** |  | 2026-08-25 | 2027-03-18 |  |  |  |
| RHD4CZ9C071ST1107 |  | Excavation works for GRP Pipe Line 1100 mm - (RD-C-7/1)-Z9-C071-ST | 2d | 2026-08-25 A | 2026-08-26 A | RHD4ENSDZ9APPST110, RHD4CZ9C071RW3000, RHD4CZ6A015IRR1100 | 100% |  |
| RHD4CZ9C071ST1207 |  | Bedding works for GRP Pipe Line 1100 mm - (RD-C-7/1)-Z9-C071-ST | 2d | 2026-09-29 A | 2026-09-30 A | RHD4CZ9C071ST1107 | 100% |  |
| RHD4CZ9C071ST1307 |  | Installing for GRP Pipe Line 1100 mm - (RD-C-7/1)-Z9-C071-ST | 2d | 2027-03-08 | 2027-03-14 | RHD4PRSHLSTAGST1008, RHD4CZ9C071ST1207, RHD4PRSHLDOSST1608, RHD4PRSHLPOST1000, RHD4PRSHLDOSST1008, RHD4PRSHLDOSST1604, RHD4PRSHLDOSST1004 |  | -146.02d |
| RHD4CZ9C071ST1407 |  | Primary Test for GRP Pipe Line 1100 mm - (RD-C-7/1)-Z9-C071-ST | 2d | 2027-03-14 | 2027-03-16 | RHD4CZ9C071ST1307 |  | -146.02d |
| RHD4CZ9C071ST1507 |  | Backfilling and warning tape works for GRP Pipe Line 1100 mm - (RD-C-7/1)-Z9-C071-ST | 2d | 2027-03-16 | 2027-03-18 | RHD4CZ9C071ST1407 |  | -146.02d |
|  | 8660 | **RHD4-02-002-C071-(ST)-GRP Pipes - 1000 mm diameter** |  | 2026-08-18 | 2027-03-16 |  |  |  |
| RHD4CZ9C071ST1106 |  | Excavation works for GRP Pipe Line 1000 mm - (RD-C-7/1)-Z9-C071-ST | 3d | 2026-08-18 A | 2026-08-20 A | RHD4ENSDZ9APPST110, RHD4CZ9C071ST1107 SS | 100% |  |
| RHD4CZ9C071ST1206 |  | Bedding works for GRP Pipe Line 1000 mm - (RD-C-7/1)-Z9-C071-ST | 3d | 2026-08-20 A | 2026-08-23 A | RHD4CZ9C071ST1106 | 100% |  |
| RHD4CZ9C071ST1306 |  | Installing for GRP Pipe Line 1000 mm - (RD-C-7/1)-Z9-C071-ST | 2d | 2026-08-25 A | 2026-08-26 A | RHD4PRSHLSTAGST1008, RHD4CZ9C071ST1206, RHD4CZ9C071ST1307, RHD4PRSHLDOSST1608, RHD4PRSHLPOST1000, RHD4PRSHLDOSST1008, RHD4PRSHLDOSST1604, RHD4PRSHLDOSST1004 | 100% |  |
| RHD4CZ9C071ST1506 |  | Backfilling and warning tape works for GRP Pipe Line 1000 mm - (RD-C-7/1)-Z9-C071-ST | 3d | 2026-08-27 A | 2026-09-19 A | RHD4CZ9C071ST1406, RHD4CZ9C071ST1507 | 100% |  |
| RHD4CZ9C071ST1406 |  | Primary Test for GRP Pipe Line 1000 mm - (RD-C-7/1)-Z9-C071-ST | 2d | 2027-03-14 | 2027-03-16 | RHD4CZ9C071ST1306 |  | -144.02d |
|  | 8659 | **RHD4-02-002-C071-(ST)-GRP Pipes - 900 mm diameter** |  | 2026-08-17 | 2027-03-16 |  |  |  |
| RHD4CZ9C071ST1105 |  | Excavation works for GRP Pipe Line 900 mm - (RD-C-7/1)-Z9-C071-ST | 2d | 2026-08-17 A | 2026-08-18 A | RHD4ENSDZ9APPST110, RHD4CZ9C071ST1106 | 100% |  |
| RHD4CZ9C071ST1205 |  | Bedding works for GRP Pipe Line 900 mm - (RD-C-7/1)-Z9-C071-ST | 2d | 2026-08-19 A | 2026-08-20 A | RHD4CZ9C071ST1105 | 100% |  |
| RHD4CZ9C071ST1305 |  | Installing for GRP Pipe Line 900 mm - (RD-C-7/1)-Z9-C071-ST | 2d | 2026-08-22 A | 2026-08-23 A | RHD4PRSHLSTAGST1008, RHD4CZ9C071ST1205, RHD4CZ9C071ST1306, RHD4PRSHLDOSST1608, RHD4PRSHLPOST1000, RHD4PRSHLDOSST1008, RHD4PRSHLDOSST1604, RHD4PRSHLDOSST1004 | 100% |  |
| RHD4CZ9C071ST1505 |  | Backfilling and warning tape works for GRP Pipe Line 900 mm - (RD-C-7/1)-Z9-C071-ST | 2d | 2026-08-24 A | 2026-08-25 A | RHD4CZ9C071ST1405, RHD4CZ9C071ST1506 | 100% |  |
| RHD4CZ9C071ST1405 |  | Primary Test for GRP Pipe Line 900 mm - (RD-C-7/1)-Z9-C071-ST | 2d | 2027-03-14 | 2027-03-16 | RHD4CZ9C071ST1305 |  | -144.02d |
|  | 8656 | **RHD4-02-002-C071-(ST)-GRP Pipes - 600 mm diameter** |  | 2026-09-15 | 2027-03-16 |  |  |  |
| RHD4CZ9C071ST1102 |  | Excavation works for GRP Pipe Line 600 mm - (RD-C-7/1)-Z9-C071-ST | 2d | 2026-09-15 A | 2026-09-16 A | RHD4ENSDZ9APPST110, RHD4CZ9C071ST1105 | 100% |  |
| RHD4CZ9C071ST1202 |  | Bedding works for GRP Pipe Line 600 mm - (RD-C-7/1)-Z9-C071-ST | 2d | 2026-09-21 A | 2026-09-22 A | RHD4CZ9C071ST1102 | 100% |  |
| RHD4CZ9C071ST1302 |  | Installing for GRP Pipe Line 600 mm - (RD-C-7/1)-Z9-C071-ST | 2d | 2026-09-24 A | 2026-09-26 A | RHD4PRSHLSTAGST1008, RHD4CZ9C071ST1202, RHD4CZ9C071ST1305, RHD4PRSHLDOSST1608, RHD4PRSHLPOST1000, RHD4PRSHLDOSST1008, RHD4PRSHLDOSST1604, RHD4PRSHLDOSST1004 | 100% |  |
| RHD4CZ9C071ST1502 |  | Backfilling and warning tape works for GRP Pipe Line 600 mm - (RD-C-7/1)-Z9-C071-ST | 2d | 2026-09-27 A | 2026-09-28 A | RHD4CZ9C071ST1402 | 100% |  |
| RHD4CZ9C071ST1402 |  | Primary Test for GRP Pipe Line 600 mm - (RD-C-7/1)-Z9-C071-ST | 2d | 2027-03-14 | 2027-03-16 | RHD4CZ9C071ST1302 |  | -134.02d |
|  | 8655 | **RHD4-02-002-C071-(ST)-GRP Pipes - 500 mm diameter** |  | 2026-08-29 | 2027-03-14 |  |  |  |
| RHD4CZ9C071ST1101 |  | Excavation works for GRP Pipe Line 500 mm - (RD-C-7/1)-Z9-C071-ST | 2d | 2026-08-29 A | 2026-08-30 A | RHD4ENSDZ9APPST110, RHD4CZ9C071ST1102 | 100% |  |
| RHD4CZ9C071ST1201 |  | Bedding works for GRP Pipe Line 500 mm - (RD-C-7/1)-Z9-C071-ST | 2d | 2026-09-15 A | 2026-09-19 A | RHD4CZ9C071ST1101 | 100% |  |
| RHD4CZ9C071ST1301 |  | Installing for GRP Pipe Line 500 mm - (RD-C-7/1)-Z9-C071-ST | 2d | 2026-09-16 A | 2026-10-06 A | RHD4PRSHLSTAGST1008, RHD4CZ9C071ST1201, RHD4PRSHLDOSST1608, RHD4PRSHLPOST1000, RHD4PRSHLDOSST1008, RHD4PRSHLDOSST1604, RHD4PRSHLDOSST1004 | 100% |  |
| RHD4CZ9C071ST1501 |  | Backfilling and warning tape works for GRP Pipe Line 500 mm - (RD-C-7/1)-Z9-C071-ST | 2d | 2026-09-17 A | 2026-10-10 A | RHD4CZ9C071ST1401 | 100% |  |
| RHD4CZ9C071ST1401 |  | Primary Test for GRP Pipe Line 500 mm - (RD-C-7/1)-Z9-C071-ST | 2d | 2027-03-08 | 2027-03-14 | RHD4CZ9C071ST1301 |  | -137.02d |
|  | 8654 | **RHD4-02-002-C071-(ST)-GRP Pipes - 400 mm diameter** |  | 2026-08-27 | 2027-03-14 |  |  |  |
| RHD4CZ9C071ST1100 |  | Excavation works for GRP Pipe Line 400 mm - (RD-C-7/1)-Z9-C071-ST | 2d | 2026-08-27 A | 2026-09-19 A | RHD4ENSDZ9APPST110, RHD4CZ9C071ST1101 | 100% |  |
| RHD4CZ9C071ST1200 |  | Bedding works for GRP Pipe Line 400 mm - (RD-C-7/1)-Z9-C071-ST | 2d | 2026-09-19 A | 2026-09-20 A | RHD4CZ9C071ST1100 | 100% |  |
| RHD4CZ9C071ST1300 |  | Installing for GRP Pipe Line 400 mm - (RD-C-7/1)-Z9-C071-ST | 2d | 2026-09-21 A | 2026-09-22 A | RHD4PRSHLSTAGST1008, RHD4CZ9C071ST1200, RHD4PRSHLDOSST1608, RHD4PRSHLPOST1000, RHD4PRSHLDOSST1008, RHD4PRSHLDOSST1604, RHD4PRSHLDOSST1004 | 100% |  |
| RHD4CZ9C071ST1500 |  | Backfilling and warning tape works for GRP Pipe Line 400 mm - (RD-C-7/1)-Z9-C071-ST | 2d | 2026-09-22 A | 2026-09-24 A | RHD4CZ9C071ST1400 | 100% |  |
| RHD4CZ9C071ST1400 |  | Primary Test for GRP Pipe Line 400 mm - (RD-C-7/1)-Z9-C071-ST | 2d | 2027-03-08 | 2027-03-14 | RHD4CZ9C071ST1300 |  | -129.02d |
|  | 8668 | **RHD4-02-002-C071-(ST)-UPVC Pipes - 300 mm diameter** |  | 2026-09-05 | 2027-03-25 |  |  |  |
| RHD4CZ9C071ST2100 |  | Excavation works for UPVC Pipe Line 300 mm - (RD-C-7/1)-Z9-C071-ST | 6d | 2026-09-05 A | 2027-03-14 | RHD4ENSDZ9APPST110, RHD4CZ9C071ST1100 | 70% | -133.02d |
| RHD4CZ9C071ST2200 |  | Bedding works for UPVC Pipe Line 300 mm - (RD-C-7/1)-Z9-C071-ST | 5d | 2026-09-12 A | 2027-03-16 | RHD4CZ9C071ST2100 | 70% | -133.02d |
| RHD4CZ9C071ST2300 |  | Installing for UPVC Pipe Line 300 mm - (RD-C-7/1)-Z9-C071-ST | 6d | 2026-09-17 A | 2027-03-18 | RHD4PRSHLDOSST1108, RHD4PRSHLSTAGST1108, RHD4CZ9C071ST2200 | 70% | -133.02d |
| RHD4CZ9C071ST2500 |  | Backfilling and warning tape works for UPVC Pipe Line 300 mm - (RD-C-7/1)-Z9-C071-ST | 6d | 2026-09-29 A | 2027-03-25 | RHD4CZ9C071ST2400, RHD4CZ9C071ST6100 | 70% | -91.02d |
| RHD4CZ9C071ST2400 |  | Primary Test for UPVC Pipe Line 300 mm - (RD-C-7/1)-Z9-C071-ST | 4d | 2027-03-18 | 2027-03-23 | RHD4CZ9C071ST2300 |  | -91.02d |
|  | 8676 | **RHD4-02-002-C071-(ST)-Concrete Encasement** |  | 2027-03-16 | 2027-03-18 |  |  |  |
| RHD4CZ9C071ST6100 |  | Pipe Encasement for Storm Pipelines - (RD-C-7/1)-Z9-C071-ST | 2d | 2027-03-16 | 2027-03-18 | RHD4CZ9C071ST2300 SS, RHD4CZ9C071ST2300 FF, RHD4CZ9C071ST2200 |  | -133.02d |
|  | 8677 | **RHD4-02-002-Z9-C071-Catch Basin - ST** |  | 2026-10-01 | 2027-05-03 |  |  |  |
|  | 8678 | **RHD4-02-002-C071-(ST)-Single Catch Basin Works** |  | 2026-10-01 | 2027-05-03 |  |  |  |
| RHD4CZ9C071ST7100 |  | Excavation works for Single Catch Basin - (RD-C-7/1)-Z9-C071-ST | 7d | 2026-10-01 A | 2027-03-23 | RHD4ENSDZ9APPST110, RHD4CZ9C071ST3300, RHD4CZ9C071ST3301 | 75% | -111.02d |
| RHD4CZ9C071ST7200 |  | PC Blinding, Installation and Pipe connection for Single Catch Basin - (RD-C-7/1)-Z9-C071-ST | 7d | 2026-10-10 A | 2027-03-31 | RHD4CZ9C071ST7100 | 76% | -111.02d |
| RHD4CZ9C071ST7300 |  | Rings & C.Slab & Final Backfill for Single Catch Basin - (RD-C-7/1)-Z9-C071-ST | 8d | 2026-10-13 A | 2027-04-10 | RHD4PRSHLDOSST1308, RHD4PRSHLSTAGST1308, RHD4CZ9C071ST7200 | 66% | -111.02d |
| RHD4CZ9C071ST7400 |  | Steel Cover for Single Catch Basin - (RD-C-7/1)-Z9-C071-ST | 7d | 2027-04-10 | 2027-04-18 | RHD4PRSHLDOSST1708, RHD4CZ9C071ST7300 |  | -111.02d |
| RHD4CZ9C071ST7500 |  | Finishing and Insulation works for Single Catch Basin - (RD-C-7/1)-Z9-C071-ST | 13d | 2027-04-18 | 2027-05-03 | RHD4CZ9C071ST7400 |  | -69.02d |
|  | 8702 | **RHD4-02-002-Z9-C071-Sewage Network - SW** |  | 2026-08-16 | 2027-06-12 |  |  |  |
|  | 8714 | **RHD4-02-002-C071-(SW)-MH Works - 1500 mm diameter** |  |  |  |  |  |  |
|  | 1895 | **RHD4-02-002-C071-(SW)-GRP Pipes - 500 mm diameter** |  | 2026-08-16 | 2027-05-11 |  |  |  |
| RHD4CZ9C071SW1102 |  | Excavation works for GRP Pipe Line 500 mm - (RD-C-7/1)-Z9-C071-SW | 4d | 2026-08-16 A | 2027-04-22 | RHD4CZ9C071ST7400, RHD4CZ9C071ST2500 | 24% | -111.02d |
| RHD4CZ9C071SW1202 |  | Bedding works for GRP Pipe Line 500 mm - (RD-C-7/1)-Z9-C071-SW | 4d | 2027-04-22 | 2027-04-27 | RHD4CZ9C071SW1102 |  | -111.02d |
| RHD4CZ9C071SW1302 |  | Installing for GRP Pipe Line 500 mm - (RD-C-7/1)-Z9-C071-SW | 4d | 2027-04-27 | 2027-05-02 | RHD4CZ9C071SW1202 |  | -111.02d |
| RHD4CZ9C071SW1402 |  | Primary Test for GRP Pipe Line 500 mm - (RD-C-7/1)-Z9-C071-SW | 4d | 2027-05-02 | 2027-05-06 | RHD4CZ9C071SW1302 |  | -111.02d |
| RHD4CZ9C071SW1502 |  | Backfilling and warning tape works for GRP Pipe Line 500 mm - (RD-C-7/1)-Z9-C071-SW | 4d | 2027-05-06 | 2027-05-11 | RHD4CZ9C071SW1402 |  | -111.02d |
|  | 3794 | **RHD4-02-002-C071-(SW)-MH Works - 1200 mm diameter** |  | 2027-04-22 | 2027-06-12 |  |  |  |
| RHD4CZ9C071SW3100 |  | Excavation and PC Blinding works for MH 1200 mm - (RD-C-7/1)-Z9-C071-SW | 5d | 2027-04-22 | 2027-04-28 | RHD4CZ9C071SW1102 |  | -110.02d |
| RHD4CZ9C071SW3200 |  | Installation of Base for MH 1200 mm - (RD-C-7/1)-Z9-C071-SW | 10d | 2027-04-28 | 2027-05-10 | RHD4CZ9C071SW3100 |  | -110.02d |

| ID | WBS | Task | Duration | Start | Finish | Predecessors | Total float |
| --- | --- | --- | --- | --- | --- | --- | --- |
| RHD4CZ9C071SW3300 |  | MH Ring and C.Slab works and Backfilling works for MH 1200 mm - (RD-C-7/1)-Z9-C071-SW | 10d | 2027-05-10 | 2027-05-26 | RHD4CZ9C071SW3200 | -110.02d |
| RHD4CZ9C071SW3400 |  | Steel Cover for MH 1200 mm - (RD-C-7/1)-Z9-C071-SW | 4d | 2027-05-26 | 2027-05-31 | RHD4CZ9C071SW3300 | -110.02d |
| RHD4CZ9C071SW3500 |  | Finishing, Benching, Testing works for MH 1200 mm - (RD-C-7/1)-Z9-C071-SW | 10d | 2027-05-31 | 2027-06-12 | RHD4CZ9C071SW3400 | -110.02d |
|  | 8707 | **RHD4-02-002-C071-(SW)-GRP Pipes - 700 mm diameter** |  |  |  |  |  |
|  | 8708 | **RHD4-02-002-C071-(SW)-UPVC Pipes - 200 mm diameter** |  |  |  |  |  |
|  | 8711 | **RHD4-02-002-C071-(SW)-Concrete Encasement** |  |  |  |  |  |
|  | 8739 | **RHD4-02-002-Z9-C071-Potable Network - PT** |  | 2027-05-11 | 2027-06-09 |  |  |
|  | 8742 | **RHD4-02-002-C071-(PT)-HDPE Pipes - 200 mm diameter** |  | 2027-05-11 | 2027-05-29 |  |  |
| RHD4CZ9C071PT1102 |  | Excavation works for HDPE Pipline 200 mm - (RD-C-7/1)-Z9-C071-PT | 2d | 2027-05-11 | 2027-05-13 | RHD4ENSDZ9APPPT130, RHD4ENMSPT2000, RHD4CZ9C071SW1502 | -111.02d |
| RHD4CZ9C071PT1202 |  | Bedding works for HDPE Pipline 200 mm - (RD-C-7/1)-Z9-C071-PT | 2d | 2027-05-13 | 2027-05-20 | RHD4CZ9C071PT1102 | -109.02d |
| RHD4CZ9C071PT1302 |  | Installing for HDPE Pipline 200 mm - (RD-C-7/1)-Z9-C071-PT | 3d | 2027-05-20 | 2027-05-24 | RHD4PRSHLDOSPT1000, RHD4PRSHLSTAGPT1000, RHD4CZ9C071PT1202 | -109.02d |
| RHD4CZ9C071PT1402 |  | Primary Test for HDPE Pipline 200 mm - (RD-C-7/1)-Z9-C071-PT | 2d | 2027-05-24 | 2027-05-26 | RHD4CZ9C071PT1302, RHD4CZ9C071PT3100 | -106.02d |
| RHD4CZ9C071PT1502 |  | Backfilling and warning tape works for HDPE Pipline 200 mm - (RD-C-7/1)-Z9-C071-PT | 2d | 2027-05-26 | 2027-05-29 | RHD4CZ9C071PT1402 | -106.02d |
|  | 8741 | **RHD4-02-002-C071-(PT)-HDPE Pipes - 160 mm diameter** |  | 2027-05-13 | 2027-06-07 |  |  |
| RHD4CZ9C071PT1101 |  | Excavation works for HDPE Pipline 160 mm - (RD-C-7/1)-Z9-C071-PT | 3d | 2027-05-13 | 2027-05-22 | RHD4ENSDZ9APPPT130, RHD4ENMSPT2000, RHD4CZ9C071PT1102 | -110.02d |
| RHD4CZ9C071PT1201 |  | Bedding works for HDPE Pipline 160 mm - (RD-C-7/1)-Z9-C071-PT | 3d | 2027-05-22 | 2027-05-25 | RHD4CZ9C071PT1101, RHD4CZ9C071PT1202 | -110.02d |
| RHD4CZ9C071PT1301 |  | Installing for HDPE Pipline 160 mm - (RD-C-7/1)-Z9-C071-PT | 5d | 2027-05-25 | 2027-05-31 | RHD4PRSHLDOSPT1000, RHD4PRSHLSTAGPT1000, RHD4CZ9C071PT1201, RHD4CZ9C071PT1302 | -110.02d |
| RHD4CZ9C071PT1401 |  | Primary Test for HDPE Pipline 160 mm - (RD-C-7/1)-Z9-C071-PT | 2d | 2027-05-31 | 2027-06-02 | RHD4CZ9C071PT1301, RHD4CZ9C071PT1402 | -110.02d |
| RHD4CZ9C071PT1501 |  | Backfilling and warning tape works for HDPE Pipline 160 mm - (RD-C-7/1)-Z9-C071-PT | 4d | 2027-06-02 | 2027-06-07 | RHD4CZ9C071PT1401, RHD4CZ9C071PT1502 | -110.02d |
|  | 8745 | **RHD4-02-002-C071-(PT)-Gate Valves (Direct Buried)** |  | 2027-05-22 | 2027-06-09 |  |  |
| RHD4CZ9C071PT3100 |  | Installation for Direct Buried Gate Valves - (RD-C-7/1)-Z9-C071-PT | 2d | 2027-05-22 | 2027-05-24 | RHD4PRSHLDOSPT1200, RHD4PRSHLSTAGPT1200, RHD4CZ9C071PT1302 FF, RHD4CZ9C071PT1302 SS | -106.02d |
| RHD4CZ9C071PT3200 |  | Stem and Service box for Direct Buried Gate Valves - (RD-C-7/1)-Z9-C071-PT | 2d | 2027-06-07 | 2027-06-09 | RHD4PRSHLDOSPT1300, RHD4PRSHLSTAGPT1300, RHD4CZ9C071PT3100, RHD4CZ9C071PT1502, RHD4CZ9C071PT1501 | -110.02d |
|  | 8748 | **RHD4-02-002-C071-(PT)-Wash out Valve Chambers** |  | 2027-05-13 | 2027-05-27 |  |  |
| RHD4CZ9C071PT2101 |  | Excavation and Bedding for Wash out Valve Chambers for Potable Water Network - (RD-C-7/1)-Z9-C071-PT | 2d | 2027-05-13 | 2027-05-20 | RHD4ENSDZ9APPPT130, RHD4CZ9C071PT1102 | -111.02d |
| RHD4CZ9C071PT2201 |  | PC works for Wash out Valve Chambers for Potable Water Network - (RD-C-7/1)-Z9-C071-PT | 2d | 2027-05-20 | 2027-05-23 | RHD4CZ9C071PT2101 | -102.02d |
| RHD4CZ9C071PT2301 |  | Installation for Wash out Valve Chambers for Potable Water Network - (RD-C-7/1)-Z9-C071-PT | 2d | 2027-05-23 | 2027-05-25 | RHD4PRSHLDOSPT1100, RHD4PRSHLDOSPT1400, RHD4PRSHLSTAGPT1100, RHD4PRSHLSTAGPT1400, RHD4CZ9C071PT2201 | -102.02d |
| RHD4CZ9C071PT2401 |  | Backfilling works for Wash out Valve Chambers for Potable Water Network - (RD-C-7/1)-Z9-C071-PT | 2d | 2027-05-25 | 2027-05-27 | RHD4CZ9C071PT2301 | -102.02d |
|  | 8749 | **RHD4-02-002-C071-(PT)-Wash out Valves** |  | 2027-05-25 | 2027-05-30 |  |  |
| RHD4CZ9C071PT3102 |  | Installation for Wash out Valves for Potable Water Network - (RD-C-7/1)-Z9-C071-PT | 2d | 2027-05-25 | 2027-05-27 | RHD4PRSHLDOSPT1200, RHD4PRSHLSTAGPT1200, RHD4CZ9C071PT2301 | -102.02d |
| RHD4CZ9C071PT3202 |  | Stem and Service box for Wash out Valves for Potable Water Network - (RD-C-7/1)-Z9-C071-PT | 2d | 2027-05-27 | 2027-05-30 | RHD4PRSHLDOSPT1300, RHD4PRSHLSTAGPT1300, RHD4CZ9C071PT3102, RHD4CZ9C071PT2401 | -102.02d |
|  | 8750 | **RHD4-02-002-C071-(PT)-Air Valve Chambers** |  | 2027-05-20 | 2027-05-30 |  |  |
| RHD4CZ9C071PT2102 |  | Excavation and Bedding for Air Valve Chambers for Potable Water Network - (RD-C-7/1)-Z9-C071-PT | 2d | 2027-05-20 | 2027-05-23 | RHD4ENSDZ9APPPT130, RHD4CZ9C071PT2101 | -111.02d |
| RHD4CZ9C071PT2202 |  | PC works for Air Valve Chambers for Potable Water Network - (RD-C-7/1)-Z9-C071-PT | 2d | 2027-05-23 | 2027-05-25 | RHD4CZ9C071PT2102 | -105.02d |
| RHD4CZ9C071PT2302 |  | Installation for Air Valve Chambers for Potable Water Network - (RD-C-7/1)-Z9-C071-PT | 2d | 2027-05-25 | 2027-05-27 | RHD4PRSHLDOSPT1100, RHD4PRSHLDOSPT1400, RHD4PRSHLSTAGPT1100, RHD4PRSHLSTAGPT1400, RHD4CZ9C071PT2202 | -105.02d |
| RHD4CZ9C071PT2402 |  | Backfilling works for Air Valve Chambers for Potable Water Network - (RD-C-7/1)-Z9-C071-PT | 2d | 2027-05-27 | 2027-05-30 | RHD4CZ9C071PT2302 | -105.02d |
|  | 8751 | **RHD4-02-002-C071-(PT)-Air Valves** |  | 2027-05-13 | 2027-05-23 |  |  |
| RHD4CZ9C071PT3103 |  | Installation for Air Valves for Potable Water Network - (RD-C-7/1)-Z9-C071-PT | 2d | 2027-05-13 | 2027-05-20 | RHD4PRSHLDOSPT1200, RHD4PRSHLSTAGPT1200, RHD4CZ9C071PT1102 | -108.02d |
| RHD4CZ9C071PT3203 |  | Stem and Service box for Air Valves for Potable Water Network - (RD-C-7/1)-Z9-C071-PT | 2d | 2027-05-20 | 2027-05-23 | RHD4PRSHLDOSPT1300, RHD4PRSHLSTAGPT1300, RHD4CZ9C071PT3103 | -108.02d |
|  | 8752 | **RHD4-02-002-C071-(PT)-Fire Hydrant** |  | 2027-05-23 | 2027-06-05 |  |  |
| RHD4CZ9C071PT4100 |  | Excavation and Bedding and Pipe Installation for Fire Hydrant - (RD-C-7/1)-Z9-C071-PT | 3d | 2027-05-23 | 2027-05-26 | RHD4ENSDZ9APPPT130, RHD4CZ9C071PT2102 | -111.02d |
| RHD4CZ9C071PT4200 |  | Valve Installation for Fire Hydrant - (RD-C-7/1)-Z9-C071-PT | 2d | 2027-05-26 | 2027-05-29 | RHD4CZ9C071PT4100 | -111.02d |
| RHD4CZ9C071PT4300 |  | Stem for Fire Hydrant - (RD-C-7/1)-Z9-C071-PT | 2d | 2027-05-29 | 2027-05-31 | RHD4CZ9C071PT4200 | -111.02d |
| RHD4CZ9C071PT4400 |  | Fire Installation for Fire Hydrant - (RD-C-7/1)-Z9-C071-PT | 2d | 2027-05-31 | 2027-06-02 | RHD4PRSHLDOSPT1500, RHD4PRSHLSTAGPT1500, RHD4CZ9C071PT4300 | -111.02d |
| RHD4CZ9C071PT4500 |  | Protection Barriers for Fire Hydrant - (RD-C-7/1)-Z9-C071-PT | 2d | 2027-06-02 | 2027-06-05 | RHD4CZ9C071PT4400 | -111.02d |
|  | 8754 | **RHD4-02-002-Z9-C071-Irrigation Network - IRR** |  | 2027-05-30 | 2027-06-23 |  |  |
|  | 8762 | **RHD4-02-002-C071-(IRR)-HDPE Pipes - 500 mm diameter** |  | 2027-05-30 | 2027-06-22 |  |  |
| RHD4CZ9C071IRR1107 |  | Excavation works for HDPE Pipline 500 mm - (RD-C-7/1)-Z9-C071-IRR | 5d | 2027-05-30 | 2027-06-05 | RHD4ENSDZ9APPIRR140, RHD4ENMSRR2000, RHD4CZ9C071PT1102 SS, RHD4CZ9C071PT2402 | -105.02d |
| RHD4CZ9C071IRR1207 |  | Bedding works for HDPE Pipline 500 mm - (RD-C-7/1)-Z9-C071-IRR | 4d | 2027-06-05 | 2027-06-09 | RHD4CZ9C071IRR1107 | -105.02d |
| RHD4CZ9C071IRR1307 |  | Installing for HDPE Pipline 500 mm - (RD-C-7/1)-Z9-C071-IRR | 5d | 2027-06-09 | 2027-06-15 | RHD4PRSHLDOSIRR1000, RHD4PRSHLSTAGIRR1000, RHD4CZ9C071IRR1207 | -105.02d |
| RHD4CZ9C071IRR1407 |  | Primary Test for HDPE Pipline 500 mm - (RD-C-7/1)-Z9-C071-IRR | 2d | 2027-06-15 | 2027-06-17 | RHD4CZ9C071IRR1307 | -105.02d |
| RHD4CZ9C071IRR1507 |  | Backfilling and warning tape works for HDPE Pipline 500 mm - (RD-C-7/1)-Z9-C071-IRR | 4d | 2027-06-17 | 2027-06-22 | RHD4CZ9C071IRR1407 | -105.02d |
|  | 8755 | **RHD4-02-002-C071-(IRR)-HDPE Pipes - 160 mm diameter** |  | 2027-06-05 | 2027-06-23 |  |  |
| RHD4CZ9C071IRR1100 |  | Excavation works for HDPE Pipline 160 mm - (RD-C-7/1)-Z9-C071-IRR | 4d | 2027-06-05 | 2027-06-09 | RHD4ENSDZ9APPIRR140, RHD4ENMSRR2000, RHD4CZ9C071IRR1107 | -105.02d |
| RHD4CZ9C071IRR1200 |  | Bedding works for HDPE Pipline 160 mm - (RD-C-7/1)-Z9-C071-IRR | 3d | 2027-06-09 | 2027-06-13 | RHD4CZ9C071IRR1100 | -105.02d |
| RHD4CZ9C071IRR1300 |  | Installing for HDPE Pipline 160 mm - (RD-C-7/1)-Z9-C071-IRR | 4d | 2027-06-13 | 2027-06-17 | RHD4PRSHLDOSIRR1000, RHD4PRSHLSTAGIRR1000, RHD4CZ9C071IRR1200 | -105.02d |
| RHD4CZ9C071IRR1400 |  | Primary Test for HDPE Pipline 160 mm - (RD-C-7/1)-Z9-C071-IRR | 2d | 2027-06-17 | 2027-06-20 | RHD4CZ9C071IRR1300 | -104.02d |
| RHD4CZ9C071IRR1500 |  | Backfilling and warning tape works for HDPE Pipline 160 mm - (RD-C-7/1)-Z9-C071-IRR | 3d | 2027-06-20 | 2027-06-23 | RHD4CZ9C071IRR1400 | -104.02d |
|  | 6116 | **RHD4-02-002-C071-(IRR)-Butterfly Valve Chamber** |  | 2027-06-09 | 2027-06-19 |  |  |
| RHD4CZ9C071IRR2100 |  | Excavation and Bedding for Butterfly Valve Chamber for Irrigation Network - (RD-C-7/1)-Z9-C071-IRR | 2d | 2027-06-09 | 2027-06-12 | RHD4CZ9C071IRR1100 | -104.02d |
| RHD4CZ9C071IRR2200 |  | PC works for Butterfly Valve Chamber for Irrigation Network - (RD-C-7/1)-Z9-C071-IRR | 2d | 2027-06-12 | 2027-06-14 | RHD4CZ9C071IRR2100 | -104.02d |
| RHD4CZ9C071IRR2300 |  | Installation for Butterfly Valve Chamber for Irrigation Network - (RD-C-7/1)-Z9-C071-IRR | 2d | 2027-06-14 | 2027-06-16 | RHD4CZ9C071IRR2200 | -104.02d |
| RHD4CZ9C071IRR2400 |  | Backfilling works for Butterfly Valve Chamber for Irrigation Network - (RD-C-7/1)-Z9-C071-IRR | 2d | 2027-06-16 | 2027-06-19 | RHD4CZ9C071IRR2300 | -104.02d |
|  | 6117 | **RHD4-02-002-C071-(IRR)-Butterfly Valves** |  | 2027-06-17 | 2027-06-22 |  |  |
| RHD4CZ9C071IRR3101 |  | Installation for Butterfly Valves for Irrigation Network - (RD-C-7/1)-Z9-C071-IRR | 2d | 2027-06-17 | 2027-06-20 | RHD4CZ9C071IRR2300, RHD4CZ9C071IRR1300 | -105.02d |
| RHD4CZ9C071IRR3201 |  | Stem and Service box for Butterfly Valves for Irrigation Network - (RD-C-7/1)-Z9-C071-IRR | 2d | 2027-06-20 | 2027-06-22 | RHD4CZ9C071IRR3101, RHD4CZ9C071IRR2400 | -105.02d |
|  | 8788 | **RHD4-02-002-Z9-C071-Medium Voltage Network - MV** |  | 2027-04-21 | 2027-06-12 |  |  |
|  | 8789 | **RHD4-02-002-C071-(MV)-Medium Voltage cable trench** |  | 2027-04-21 | 2027-06-12 |  |  |
| RHD4CZ9C071MV1100 |  | Excavation for Medium Voltage Trench - (RD-C-7/1)-Z9-C071-MV | 9d | 2027-04-21 | 2027-05-01 | RHD4ENSDZ9APPMV150, RHD4CZ9C071RD3100 | -196d |
| RHD4CZ9C071MV1200 |  | Trench Backfilling for Medium Voltage Network - (RD-C-7/1)-Z9-C071-MV | 9d | 2027-06-02 | 2027-06-12 | RHD4CZ9C071MV3300 | -196d |
|  | 8790 | **RHD4-02-002-C071-(MV)-Medium Voltage duct banks** |  | 2027-05-02 | 2027-05-25 |  |  |

| ID | WBS | Task | Duration | Start | Finish | Predecessors | Total float |
| --- | --- | --- | --- | --- | --- | --- | --- |
| RHD4CZ9C071MV2100 |  | Excavation of Duct Banks for Medium Voltage Network - (RD-C-7/1)-Z9-C071-MV | 4d | 2027-05-02 | 2027-05-05 | RHD4ENSDZ9APPMV150, RHD4CZ9C071MV1100 | -195d |
| RHD4CZ9C071MV2200 |  | Installation of Duct Banks for Medium Voltage Network - (RD-C-7/1)-Z9-C071-MV | 6d | 2027-05-06 | 2027-05-12 | RHD4PRSHLDOSMV1000, RHD4PRSHLSTAGMV1000, RHD4CZ9C071MV2100 | -195d |
| RHD4CZ9C071MV2300 |  | Pouring of Duct Banks for Medium Voltage Network - (RD-C-7/1)-Z9-C071-MV | 4d | 2027-05-13 | 2027-05-22 | RHD4CZ9C071MV2200 | -195d |
| RHD4CZ9C071MV2400 |  | Backfilling of Duct Banks for Medium Voltage Network - (RD-C-7/1)-Z9-C071-MV | 3d | 2027-05-23 | 2027-05-25 | RHD4CZ9C071MV2300 | -195d |
|  | 8791 | **RHD4-02-002-C071-(MV)-Medium Voltage cables 3Cx 500 mm²** |  | 2027-05-02 | 2027-06-01 |  |  |
| RHD4CZ9C071MV3100 |  | Installation of Medium Voltage Cables 3Cx 500 mm² - (RD-C-7/1)-Z9-C071-MV | 15d | 2027-05-02 | 2027-05-23 | RHD4PRSHLDOSMV1100, RHD4ENMSMV2000, RHD4ENMSMV2010, RHD4PRSHLSTAGMV1100, RHD4CZ9C071MV1100 | -196d |
| RHD4CZ9C071MV3200 |  | Joints Installation of Medium Voltage Cables 3Cx 500 mm² - (RD-C-7/1)-Z9-C071-MV | 3d | 2027-05-24 | 2027-05-26 | RHD4PRSHLDOSMV1300, RHD4PRSHLSTAGMV1300, RHD4CZ9C071MV3100 | -196d |
| RHD4CZ9C071MV3300 |  | Testing of Medium Voltage Cables 3Cx 500 mm² - (RD-C-7/1)-Z9-C071-MV | 5d | 2027-05-27 | 2027-06-01 | RHD4CZ9C071MV3200, RHD4CZ9C071MV2400 | -196d |
|  | 8795 | **RHD4-02-002-Z9-C071-Low Voltage Network - LV** |  | 2027-06-05 | 2027-07-15 |  |  |
|  | 8796 | **RHD4-02-002-C071-(LV)-Low Voltage duct banks** |  | 2027-06-05 | 2027-06-14 |  |  |
| RHD4CZ9C071LV2100 |  | Excavation of Duct Banks for Low Voltage Network - (RD-C-7/1)-Z9-C071-LV | 2d | 2027-06-05 | 2027-06-07 | RHD4ENSDZ9APPLV160, RHD4CZ9C071PT4500, RHD4CZ9C071MV2100 | -111.02d |
| RHD4CZ9C071LV2200 |  | Installation of Duct Banks for Low Voltage Network - (RD-C-7/1)-Z9-C071-LV | 2d | 2027-06-07 | 2027-06-09 | RHD4PRSHLDOSLV1000, RHD4PRSHLSTAGLV1000, RHD4CZ9C071LV2100 | -111.02d |
| RHD4CZ9C071LV2300 |  | Pouring of Duct Banks for Low Voltage Network - (RD-C-7/1)-Z9-C071-LV | 2d | 2027-06-09 | 2027-06-12 | RHD4CZ9C071LV2200 | -111.02d |
| RHD4CZ9C071LV2400 |  | Backfilling of Duct Banks for Low Voltage Network - (RD-C-7/1)-Z9-C071-LV | 2d | 2027-06-12 | 2027-06-14 | RHD4CZ9C071LV2300 | -111.02d |
|  | 8797 | **RHD4-02-002-C071-(LV)-Low Voltage Drawpit** |  | 2027-06-14 | 2027-06-19 |  |  |
| RHD4CZ9C071LV5100 |  | Excavation of Drawpit size 900x900x1000mm for Low Voltage Network - (RD-C-7/1)-Z9-C071-LV | 2d | 2027-06-14 | 2027-06-16 | RHD4ENSDZ9APPLV160, RHD4CZ9C071LV2400, RHD4CZ9C071MV1200 | -111.02d |
| RHD4CZ9C071LV5200 |  | Installation of Drawpit size 900x900x1000mm for Low Voltage Network - (RD-C-7/1)-Z9-C071-LV | 2d | 2027-06-16 | 2027-06-19 | RHD4PRSHLDOSLV1400, RHD4PRSHLSTAGLV1400, RHD4CZ9C071LV5100 | -111.02d |
|  | 8798 | **RHD4-02-002-C071-(LV)-Low Voltage cables** |  | 2027-06-19 | 2027-07-15 |  |  |
| RHD4CZ9C071LV3100 |  | Excavation for Low Voltage Cables for Low Voltage Network - (RD-C-7/1)-Z9-C071-LV | 7d | 2027-06-19 | 2027-06-27 | RHD4ENSDZ9APPLV160, RHD4CZ9C071LV5200, RHD4CZ3L122ICT5200 | -111.02d |
| RHD4CZ9C071LV3200 |  | Cable Laying of Low Voltage Cables for Low Voltage Network - (RD-C-7/1)-Z9-C071-LV | 6d | 2027-06-27 | 2027-07-04 | RHD4PRSHLDOSLV1100, RHD4ENMSLV2000, RHD4ENMSLV2010, RHD4PRSHLSTAGLV1100, RHD4CZ9C071LV3100 | -111.02d |
| RHD4CZ9C071LV3300 |  | Warning tape and Backfill for Low Voltage Cables for Low Voltage Network - (RD-C-7/1)-Z9-C071-LV | 6d | 2027-07-04 | 2027-07-11 | RHD4CZ9C071LV3200 | -111.02d |
| RHD4CZ9C071LV3400 |  | Testing of Low Voltage Cables for Low Voltage Network - (RD-C-7/1)-Z9-C071-LV | 4d | 2027-07-11 | 2027-07-15 | RHD4CZ9C071LV3300 | -111.02d |
|  | 8801 | **RHD4-02-002-Z9-C071-Street Lighting Network - SL** |  | 2027-10-13 | 2027-12-27 |  |  |
|  | 8802 | **RHD4-02-002-C071-(SL)-Street Lighting duct banks** |  | 2027-10-13 | 2027-11-07 |  |  |
| RHD4CZ9C071SL2100 |  | Excavation of Duct Banks for Street Lighting Network - (RD-C-7/1)-Z9-C071-SL | 5d | 2027-10-13 | 2027-10-19 | RHD4ENSDZ9APPSL170, RHD4CZ9C071LV2100, RHD4CTUN1Z5STG21490 | -153.02d |
| RHD4CZ9C071SL2200 |  | Installation of Duct Banks for Street Lighting Network - (RD-C-7/1)-Z9-C071-SL | 7d | 2027-10-19 | 2027-10-27 | RHD4PRSHLDOSSL1000, RHD4PRSHLSTAGSL1000, RHD4CZ9C071SL2100 | -153.02d |
| RHD4CZ9C071SL2300 |  | Pouring of Duct Banks for Street Lighting Network - (RD-C-7/1)-Z9-C071-SL | 5d | 2027-10-27 | 2027-11-02 | RHD4CZ9C071SL2200 | -153.02d |
| RHD4CZ9C071SL2400 |  | Backfilling of Duct Banks for Street Lighting Network - (RD-C-7/1)-Z9-C071-SL | 4d | 2027-11-02 | 2027-11-07 | RHD4CZ9C071SL2300 | -130.02d |
|  | 8803 | **RHD4-02-002-C071-(SL)-Street Lighting Drawpit** |  | 2027-11-02 | 2027-11-07 |  |  |
| RHD4CZ9C071SL5100 |  | Excavation of Drawpit size 600x600x900mm for Street Lighting Network - (RD-C-7/1)-Z9-C071-SL | 2d | 2027-11-02 | 2027-11-04 | RHD4ENSDZ9APPSL170, RHD4CZ9C071SL2300, RHD4CZ9C071LV3400 | -153.02d |
| RHD4CZ9C071SL5200 |  | Installation of Drawpit size 600x600x900mm for Street Lighting Network - (RD-C-7/1)-Z9-C071-SL | 2d | 2027-11-04 | 2027-11-07 | RHD4PRSHLDOSSL1400, RHD4PRSHLSTAGSL1400, RHD4CZ9C071SL5100 | -153.02d |
|  | 8804 | **RHD4-02-002-C071-(SL)-Street Lighting cables** |  | 2027-11-07 | 2027-12-04 |  |  |
| RHD4CZ9C071SL3100 |  | Excavation for Street Lighting Cables for Street Lighting Network - (RD-C-7/1)-Z9-C071-SL | 7d | 2027-11-07 | 2027-11-15 | RHD4ENSDZ9APPSL170, RHD4CZ9C071SL5200 | -153.02d |
| RHD4CZ9C071SL3200 |  | Cable Laying of Street Lighting Cables for Street Lighting Network - (RD-C-7/1)-Z9-C071-SL | 6d | 2027-11-15 | 2027-11-22 | RHD4PRSHLDOSSL1100, RHD4ENMSSL2000, RHD4ENMSSL2010, RHD4PRSHLSTAGSL1100, RHD4CZ9C071SL3100 | -153.02d |
| RHD4CZ9C071SL3300 |  | Warning tape and Backfill for Street Lighting Cables for Street Lighting Network - (RD-C-7/1)-Z9-C071-SL | 6d | 2027-11-22 | 2027-11-29 | RHD4CZ9C071SL3200 | -153.02d |
| RHD4CZ9C071SL3400 |  | Testing of Street Lighting Cables for Street Lighting Network - (RD-C-7/1)-Z9-C071-SL | 4d | 2027-11-29 | 2027-12-04 | RHD4CZ9C071SL3300 | -153.02d |
|  | 8805 | **RHD4-02-002-C071-(SL)-Street Lighting Poles** |  | 2027-12-04 | 2027-12-25 |  |  |
| RHD4CZ9C071SL1100 |  | Excavation for RC Base for Lighting Poles for Street Lighting Network - (RD-C-7/1)-Z9-C071-SL | 3d | 2027-12-04 | 2027-12-07 | RHD4ENSDZ9APPSL170, RHD4CZ9C071SL3400, RHD4CZ9C071SL2400 | -153.02d |
| RHD4CZ9C071SL1200 |  | Installation for RC Base for Lighting Poles for Street Lighting Network - (RD-C-7/1)-Z9-C071-SL | 3d | 2027-12-07 | 2027-12-11 | RHD4CZ9C071SL1100 | -153.02d |
| RHD4CZ9C071SL1300 |  | Backfill for RC Base for Lighting Poles for Street Lighting Network - (RD-C-7/1)-Z9-C071-SL | 3d | 2027-12-11 | 2027-12-14 | RHD4CZ9C071SL1200 | -153.02d |
| RHD4CZ9C071SL1400 |  | Installation for Lighting Poles for Street Lighting Network - (RD-C-7/1)-Z9-C071-SL | 4d | 2027-12-14 | 2027-12-19 | RHD4PRSHLDOSSL1200, RHD4ENMSSL2000, RHD4ENMSSL2010, RHD4PRSHLSTAGSL1200, RHD4CZ9C071SL1300 | -153.02d |
| RHD4CZ9C071SL1500 |  | Luminaire Installation for Lighting Poles for Street Lighting Network - (RD-C-7/1)-Z9-C071-SL | 5d | 2027-12-19 | 2027-12-25 | RHD4PRSHLDOSSL1300, RHD4PRSHLSTAGSL1300, RHD4CZ9C071SL1400 | -153.02d |
|  | 8806 | **RHD4-02-002-C071-(SL)-Street Lighting Feeder Pillars** |  |  |  |  |  |
|  | 8807 | **RHD4-02-002-C071-(SL)-Street Lighting Earthing System** |  | 2027-12-25 | 2027-12-27 |  |  |
| RHD4CZ9C071SL6100 |  | Installation of Earthing for Lighting Poles and Fedder Pillers for Street Lighting Network - (RD-C-7/1)-Z9-C071-SL | 2d | 2027-12-25 | 2027-12-27 | RHD4ENMSER2000, RHD4ENMSER2010, RHD4CZ9C071SL1500, RHD4CZ3L122LV5200 | -153.02d |
|  | 8813 | **RHD4-02-002-Z9-C071-Telecommunications Network - TC** |  | 2027-02-14 | 2028-04-20 |  |  |
|  | 8814 | **RHD4-02-002-C071-(TC)-Telecommunications Ducts** |  | 2027-12-27 | 2028-03-18 |  |  |
| RHD4CZ9C071TC2100 |  | Excavation of HDPE Ducts for Telecom Network - (RD-C-7/1)-Z9-C071-TC | 14d | 2027-12-27 | 2028-01-12 | RHD4ENSDZ9APPTC190, RHD4CZ9C071SL6100 | -153.02d |
| RHD4CZ9C071TC2200 |  | Installation of HDPE Ducts for Telecom Network - (RD-C-7/1)-Z9-C071-TC | 21d | 2028-02-01 | 2028-03-01 | RHD4PRSHLDOSTC1000, RHD4PRSHLSTAGTC1000, RHD4CZ9C071TC2100, RHD4CZ6A015RD7100 | -170.02d |
| RHD4CZ9C071TC2400 |  | Backfilling of HDPE Ducts for Telecom Network - (RD-C-7/1)-Z9-C071-TC | 14d | 2028-03-01 | 2028-03-18 | RHD4CZ9C071TC2200 | -170.02d |
|  | 8815 | **RHD4-02-002-C071-(TC)-Telecommunications Manholes** |  | 2028-03-29 | 2028-04-20 |  |  |
| RHD4CZ9C071TC5100 |  | Excavation for Manholes for Telecom Network - (RD-C-7/1)-Z9-C071-TC | 10d | 2028-03-29 | 2028-04-09 | RHD4ENSDZ9APPTC190, RHD4CZ9C071TC2400, RHD4CZ3C011SL6100, RHD4CZ1C081RD7100, RHD4CZ7C032RD7100, RHD4CZ7C032RD8100, RHD4CZ4L09RD7100, RHD4CZ5RA07RD9200 | -180d |
| RHD4CZ9C071TC5200 |  | Installation of Manholes for Telecom Network - (RD-C-7/1)-Z9-C071-TC | 10d | 2028-04-10 | 2028-04-20 | RHD4PRSHLDOSTC1200, RHD4PRSHLSTAGTC1200, RHD4CZ9C071TC5100, RHD4CZ3C011SL1500 | -180d |
|  | 8816 | **RHD4-02-002-C071-(TC)-Telecomminications Road Crossings** |  | 2027-02-14 | 2027-03-20 |  |  |
| RHD4CZ9C071TC3100 |  | Excavation for Road Crossings for Telecom Network - (RD-C-7/1)-Z9-C071-TC | 5d | 2027-02-14 | 2027-02-18 | RHD4ENSDZ9APPTC190, RHD4PRSHLDOSICT1000 | -196d |
| RHD4CZ9C071TC3200 |  | Installation of Road Crossings for Telecom Network - (RD-C-7/1)-Z9-C071-TC | 7d | 2027-02-20 | 2027-02-28 | RHD4PRSHLDOSTC1100, RHD4PRSHLSTAGTC1100, RHD4CZ9C071TC3100 | -196d |
| RHD4CZ9C071TC3300 |  | Pouring of Road Crossings for Telecom Network - (RD-C-7/1)-Z9-C071-TC | 7d | 2027-03-01 | 2027-03-08 | RHD4CZ9C071TC3200 | -196d |
| RHD4CZ9C071TC3400 |  | Backfilling of Road Crossings for Telecom Network - (RD-C-7/1)-Z9-C071-TC | 7d | 2027-03-13 | 2027-03-20 | RHD4CZ9C071TC3300 | -196d |
|  | 8817 | **RHD4-02-002-Z9-C071-Information and Communication Technologies - ICT** |  | 2027-02-14 | 2028-07-11 |  |  |
|  | 8818 | **RHD4-02-002-C071-(ICT)-Information and Communication Technologies Ducts** |  | 2028-04-22 | 2028-06-20 |  |  |
| RHD4CZ9C071ICT2100 |  | Excavation of HDPE Ducts for ICT Network - (RD-C-7/1)-Z9-C071-ICT | 14d | 2028-04-22 | 2028-05-10 | RHD4ENSDZ9APPICT200, RHD4CZ9C071TC5200, RHD4GNLVZ7FT1500, RHD4CZ7L03CCTV1500 | -180d |
| RHD4CZ9C071ICT2200 |  | Installation of HDPE Ducts for ICT Network - (RD-C-7/1)-Z9-C071-ICT | 21d | 2028-05-11 | 2028-06-04 | RHD4PRSHLDOSICT1000, RHD4PRSHLSTAGICT1000, RHD4CZ9C071ICT2100 | -180d |
| RHD4CZ9C071ICT2400 |  | Backfilling of HDPE Ducts for ICT Network - (RD-C-7/1)-Z9-C071-ICT | 14d | 2028-06-05 | 2028-06-20 | RHD4CZ9C071ICT2200 | -180d |
|  | 8819 | **RHD4-02-002-C071-(ICT)-Information and Communication Technologies Manholes** |  | 2028-06-21 | 2028-07-11 |  |  |
| RHD4CZ9C071ICT5100 |  | Excavation for Manholes for ICT Network - (RD-C-7/1)-Z9-C071-ICT | 9d | 2028-06-21 | 2028-07-01 | RHD4ENSDZ9APPICT200, RHD4CZ9C071ICT2400 | -178d |
| RHD4CZ9C071ICT5200 |  | Installation of Manholes for ICT Network - (RD-C-7/1)-Z9-C071-ICT | 9d | 2028-07-02 | 2028-07-11 | RHD4PRSHLDOSICT1200, RHD4PRSHLSTAGICT1200, RHD4CZ9C071ICT5100, RHD4CZ8A011RD8100 | -178d |
|  | 8820 | **RHD4-02-002-C071-(ICT)-Information and Communication Technologies Road Crossings** |  | 2027-02-14 | 2027-03-07 |  |  |
| RHD4CZ9C071ICT3100 |  | Excavation for Road Crossings for ICT Network - (RD-C-7/1)-Z9-C071-ICT | 4d | 2027-02-14 | 2027-02-17 | RHD4ENSDZ9APPICT200, RHD4PRSHLDOSICT1000 | -188d |
| RHD4CZ9C071ICT3200 |  | Installation of Road Crossings for ICT Network - (RD-C-7/1)-Z9-C071-ICT | 5d | 2027-02-18 | 2027-02-24 | RHD4PRSHLDOSICT1100, RHD4PRSHLSTAGICT1100, RHD4CZ9C071ICT3100 | -188d |
| RHD4CZ9C071ICT3300 |  | Pouring of Road Crossings for ICT Network - (RD-C-7/1)-Z9-C071-ICT | 5d | 2027-02-25 | 2027-03-02 | RHD4CZ9C071ICT3200 | -188d |

| ID | WBS | Task | Duration | Start | Finish | Predecessors | Complete | Total float |
| --- | --- | --- | --- | --- | --- | --- | --- | --- |
| RHD4CZ9C071ICT3400 |  | Backfilling of Road Crossings for ICT Network - (RD-C-7/1)-Z9-C071-ICT | 4d | 2027-03-03 | 2027-03-07 | RHD4CZ9C071ICT3300 |  | -188d |
|  | 8808 | **RHD4-02-002-Z9-C071-Landscape Network - LS** |  |  |  |  |  |  |
|  | 8809 | **RHD4-02-002-C071-(LS)-Landscape Lighting cables** |  |  |  |  |  |  |
|  | 8811 | **RHD4-02-002-C071-(LS)-Landscape Bollard Poles** |  |  |  |  |  |  |
|  | 8821 | **RHD4-02-002-Z9-C071-Security Network - CCTV** |  | 2028-07-02 | 2028-08-01 |  |  |  |
|  | 8822 | **RHD4-02-002-C071-(CCTV)-Civil Works** |  | 2028-07-02 | 2028-07-06 |  |  |  |
| RHD4CZ9C071CCTV2100 |  | Civil Works for Security Network - (RD-C-7/1)-Z9-C071-CCTV | 5d | 2028-07-02 | 2028-07-06 | RHD4CZ9C071ICT5200 SS, RHD4CZ8RA04RD9100 |  | -178d |
|  | 8823 | **RHD4-02-002-C071-(CCTV)-CCTV Poles** |  | 2028-07-08 | 2028-07-18 |  |  |  |
| RHD4CZ9C071CCTV1100 |  | Excavation for RC Base for CCTV Poles for Security Network - (RD-C-7/1)-Z9-C071-CCTV | 2d | 2028-07-08 | 2028-07-09 | RHD4ENSDZ9APPCCTV210, RHD4CZ9C071CCTV2100, RHD4HOASZ9APPLV160 |  | -178d |
| RHD4CZ9C071CCTV1200 |  | Installation for RC Base for CCTV Poles for Security Network - (RD-C-7/1)-Z9-C071-CCTV | 2d | 2028-07-10 | 2028-07-11 | RHD4CZ9C071CCTV1100 |  | -178d |
| RHD4CZ9C071CCTV1300 |  | Backfill for RC Base for CCTV Poles for Security Network - (RD-C-7/1)-Z9-C071-CCTV | 2d | 2028-07-12 | 2028-07-13 | RHD4CZ9C071CCTV1200 |  | -178d |
| RHD4CZ9C071CCTV1400 |  | Installation for CCTV Poles for Security Network - (RD-C-7/1)-Z9-C071-CCTV | 2d | 2028-07-15 | 2028-07-16 | RHD4PRSHLDOSCCTV1000, RHD4PRSHLSTACCTV1000, RHD4CZ9C071CCTV1300 |  | -178d |
| RHD4CZ9C071CCTV1500 |  | Protection post Installation for CCTV Poles for Security Network - (RD-C-7/1)-Z9-C071-CCTV | 2d | 2028-07-17 | 2028-07-18 | RHD4CZ9C071CCTV1400 |  | -178d |
|  | 8824 | **RHD4-02-002-C071-(CCTV)-Camera** |  | 2028-07-19 | 2028-07-20 |  |  |  |
| RHD4CZ9C071CCTV3100 |  | Installation for Cameras for Security Network - (RD-C-7/1)-Z9-C071-CCTV | 2d | 2028-07-19 | 2028-07-20 | RHD4PRSHLDOSCCTV1100, RHD4PRSHLSTACCTV1100, RHD4CZ9C071CCTV1500 |  | -178d |
|  | 8825 | **RHD4-02-002-C071-(CCTV)-Power and Infrastructure** |  | 2028-07-22 | 2028-07-23 |  |  |  |
| RHD4CZ9C071CCTV4100 |  | Installation of Power outlet, UPS and midspan for PTZ Camerafor Cameras for Security Network - (RD-C-7/1)-Z9-C071-CCTV | 2d | 2028-07-22 | 2028-07-23 | RHD4PRSHLDOSCCTV1300, RHD4PRSHLSTACCTV1300, RHD4CZ9C071CCTV3100 |  | -178d |
|  | 8827 | **RHD4-02-002-C071-(CCTV)-CCTV Panels and Components** |  | 2028-07-24 | 2028-08-01 |  |  |  |
| RHD4CZ9C071CCTV6100 |  | Installation for CCTV Panels for Security Network - (RD-C-7/1)-Z9-C071-CCTV | 8d | 2028-07-24 | 2028-08-01 | RHD4PRSHLDOSCCTV1200, RHD4PRSHLSTACCTV1200, RHD4PRLOLSTACCTV1001, RHD4CZ9C071CCTV4100 |  | -173d |
|  | 8838 | **RHD4-02-002-Z9-L05** |  | 2026-09-19 | 2027-08-29 |  |  |  |
|  | 8869 | **RHD4-02-002-Z9-L05-Crossings Sewage Network - SWCr** |  |  |  |  |  |  |
|  | 8874 | **RHD4-02-002-L05-(SWCr)-GRP Pipes - 700 mm diameter** |  |  |  |  |  |  |
|  | 8881 | **RHD4-02-002-L05-(SWCr)-MH Works - 1500 mm diameter** |  |  |  |  |  |  |
|  | 8913 | **RHD4-02-002-Z9-L05-Crossings Potable Network - PTCr** |  |  |  |  |  |  |
|  | 8915 | **RHD4-02-002-L05-(PTCr)-HDPE Pipes - 160 mm diameter** |  |  |  |  |  |  |
|  | 8919 | **RHD4-02-002-L05-(PTCr)-Gate Valves (Direct Buried)** |  |  |  |  |  |  |
|  | 8960 | **RHD4-02-002-Z9-L05-Crossings Irrigation Network - IRRC** |  |  |  |  |  |  |
|  | 8968 | **RHD4-02-002-L05-(IRRC)-HDPE Pipes - 500 mm diameter** |  |  |  |  |  |  |
|  | 8970 | **RHD4-02-002-L05-(IRRC)-Butterfly Valve Chamber** |  |  |  |  |  |  |
|  | 8971 | **RHD4-02-002-L05-(IRRC)-Butterfly Valves** |  |  |  |  |  |  |
|  | 9017 | **RHD4-02-002-Z9-L05-Road Works - RD** |  | 2027-02-04 | 2027-08-29 |  |  |  |
|  | 9018 | **RHD4-02-002-L05-(RD)-Subgrade** |  | 2027-02-04 | 2027-02-06 |  |  |  |
| RHD4CZ9L05RD1100 |  | Supply, lay and compaction subgrade compacted thickness 300 mm for Roads - (RD-L-5)-Z9-L05-RD | 2d | 2027-02-04 | 2027-02-06 | RHD4ENSDZ9APPEW100, RHD4ENSDZ9APPRD220, RHD4CZ9L05ST7500 |  | -149d |
|  | 9019 | **RHD4-02-002-L05-(RD)-Aggregate Base Course** |  | 2027-02-07 | 2027-02-08 |  |  |  |
| RHD4CZ9L05RD2100 |  | Supply, lay and compaction Aggregate base course compacted thickness 300 mmfor Roads - (RD-L-5)-Z9-L05-RD | 2d | 2027-02-07 | 2027-02-08 | RHD4PRSHLDOSRD1000, RHD4PRSHLSTAGRD1000, RHD4CZ9L05RD1100 |  | -149d |
|  | 9020 | **RHD4-02-002-L05-(RD)-Bituminous base course Two Layers, including (MC1)&(RC2)** |  | 2027-02-09 | 2027-08-03 |  |  |  |
| RHD4CZ9L05RD3100 |  | Supply, lay and Asphaltic base course including Prime Coat (MC1) for 1st Layer - (RD-L-5)-Z9-L05-RD | 2d | 2027-02-09 | 2027-02-10 | RHD4PRSHLDOSRD1100, RHD4ENMSASPH2000, RHD4ENMSASPH2010, RHD4PRSHLSTAGRD1100, RHD4CZ9L05RD2100 |  | -149d |
| RHD4CZ9L05RD3200 |  | Supply, lay and Asphaltic base course including Tack Coat (RC2) for 2nd Layer - (RD-L-5)-Z9-L05-RD | 2d | 2027-08-01 | 2027-08-03 | RHD4PRSHLDOSRD1100, RHD4PRSHLSTAGRD1100, RHD4CZ9L05ICT2400 |  | -131.02d |
|  | 9022 | **RHD4-02-002-L05-(RD)-Precast Concrete Curb** |  | 2027-08-03 | 2027-08-09 |  |  |  |
| RHD4CZ9L05RD5100 |  | Supply and installation Precast Concrete Kerb for Roads - (RD-L-5)-Z9-L05-RD | 5d | 2027-08-03 | 2027-08-09 | RHD4PRSHLDOSRD1200, RHD4ENMSRD2000, RHD4ENMSRD2010, RHD4PRSHLSTAGRD1200, RHD4CZ9L05RD3200 |  | -131.02d |
|  | 9025 | **RHD4-02-002-L05-(RD)-Traffic Signage** |  | 2027-08-09 | 2027-08-16 |  |  |  |
| RHD4CZ9L05RD8100 |  | Installation of Traffic Signage for Road Network - (RD-L-5)-Z9-L05-RD | 6d | 2027-08-09 | 2027-08-16 | RHD4PRSHLDOSRD1600, RHD4PRSHLSTAGRD1600, RHD4CZ9L05RD5100 |  | -131.02d |
|  | 9023 | **RHD4-02-002-L05-(RD)-Precast Interlocking Block Pavers** |  | 2027-08-16 | 2027-08-18 |  |  |  |
| RHD4CZ9L05RD6100 |  | Interlocking block pavers for sidewalk-footpath for Side walks and Parking areas - (RD-L-5)-Z9-L05-RD | 2d | 2027-08-16 | 2027-08-18 | RHD4PRSHLDOSRD1300, RHD4PRSHLDOSRD1400, RHD4ENMSRD2000, RHD4ENMSRD2010, RHD4PRSHLSTAGRD1300, RHD4PRSHLSTAGRD1400, RHD4CZ9L05RD8100 |  | -131.02d |
|  | 9021 | **RHD4-02-002-L05-(RD)-Bituminous concrete wearing course including tack coat (RC2)** |  | 2027-08-18 | 2027-08-21 |  |  |  |
| RHD4CZ9L05RD4100 |  | Supply, lay and compaction Asphaltic wearing course including tack Coat (RC2)for Road Network - (RD-L-5)-Z9-L05-RD | 2d | 2027-08-18 | 2027-08-21 | RHD4CZ9L05RD5100, RHD4CZ9L05RD6100 |  | -131.02d |
|  | 9024 | **RHD4-02-002-L05-(RD)-Pavement Marking** |  | 2027-08-21 | 2027-08-29 |  |  |  |
| RHD4CZ9L05RD7100 |  | Pavement Markings for Road Network - (RD-L-5)-Z9-L05-RD | 7d | 2027-08-21 | 2027-08-29 | RHD4PRSHLDOSRD1500, RHD4PRSHLSTAGRD1500, RHD4CZ9L05RD4100 |  | -131.02d |
|  | 8842 | **RHD4-02-002-Z9-L05-Storm Network - ST** |  | 2026-09-19 | 2027-05-29 |  |  |  |
|  | 8859 | **RHD4-02-002-L05-(ST)-MH Works - 1200 mm diameter** |  | 2026-09-19 | 2027-05-29 |  |  |  |
| RHD4CZ9L05ST3100 |  | Excavation and PC Blinding works for MH 1200 mm - (RD-L-5)-Z9-L05-ST | 2d | 2026-09-19 A | 2026-09-20 A | RHD4ENSDZ9APPST110, RHD4ENMSST2000, RHD4ENMSST2010, RHD4CZ9L05ST2100 | 100% |  |
| RHD4CZ9L05ST3200 |  | Installation of Base for MH 1200 mm - (RD-L-5)-Z9-L05-ST | 2d | 2026-09-22 A | 2026-09-24 A | RHD4PRSHLSTAGST1608, RHD4CZ9L05ST3100 | 100% |  |
| RHD4CZ9L05ST3300 |  | MH Ring and C.Slab works and Backfilling works for MH 1200 mm - (RD-L-5)-Z9-L05-ST | 2d | 2027-04-14 | 2027-04-17 | RHD4PRSHLDOSST1608, RHD4CZ9L05ST3200 |  | -99.02d |
| RHD4CZ9L05ST3400 |  | Steel Cover for MH 1200 mm - (RD-L-5)-Z9-L05-ST | 2d | 2027-05-24 | 2027-05-26 | RHD4PRSHLDOSST1708, RHD4PRSHLSTAGST1708, RHD4CZ9L05ST3300, RHD4CZ9L05ST2500, RHD4CZ9L05PT4400, RHD4CZ9C071ST3401 |  | -127.02d |
| RHD4CZ9L05ST3500 |  | Finishing, Benching, Testing works for MH 1200 mm - (RD-L-5)-Z9-L05-ST | 2d | 2027-05-26 | 2027-05-29 | RHD4CZ9L05ST3400, RHD4CZ9C071ST3501 |  | -127.02d |
|  | 8845 | **RHD4-02-002-L05-(ST)-GRP Pipes - 600 mm diameter** |  | 2026-09-19 | 2027-04-17 |  |  |  |
| RHD4CZ9L05ST1102 |  | Excavation works for GRP Pipe Line 600 mm - (RD-L-5)-Z9-L05-ST | 2d | 2026-09-19 A | 2027-01-05 A | RHD4ENSDZ9APPST110, RHD4CZ9L05RW3000, RHD4CZ9L02ST1508 | 100% |  |
| RHD4CZ9L05ST1202 |  | Bedding works for GRP Pipe Line 600 mm - (RD-L-5)-Z9-L05-ST | 2d | 2026-09-22 A | 2027-01-07 A | RHD4CZ9L05ST1102 | 100% |  |
| RHD4CZ9L05ST1302 |  | Installing for GRP Pipe Line 600 mm - (RD-L-5)-Z9-L05-ST | 2d | 2026-09-24 A | 2027-01-10 A | RHD4PRSHLSTAGST1008, RHD4CZ9L05ST1202, RHD4PRSHLDOSST1608, RHD4PRSHLPOST1000, RHD4PRSHLDOSST1008, RHD4PRSHLDOSST1604, RHD4PRSHLDOSST1004 | 100% |  |
| RHD4CZ9L05ST1502 |  | Backfilling and warning tape works for GRP Pipe Line 600 mm - (RD-L-5)-Z9-L05-ST | 2d | 2026-09-27 A | 2027-01-14 A | RHD4CZ9L05ST1402 | 100% |  |
| RHD4CZ9L05ST1402 |  | Primary Test for GRP Pipe Line 600 mm - (RD-L-5)-Z9-L05-ST | 2d | 2027-04-14 | 2027-04-17 | RHD4CZ9L05ST1302 |  | -138.02d |
|  | 8844 | **RHD4-02-002-L05-(ST)-GRP Pipes - 500 mm diameter** |  | 2026-09-19 | 2027-04-17 |  |  |  |
| RHD4CZ9L05ST1101 |  | Excavation works for GRP Pipe Line 500 mm - (RD-L-5)-Z9-L05-ST | 2d | 2026-09-19 A | 2026-09-20 A | RHD4ENSDZ9APPST110, RHD4CZ9L05ST1102 | 100% |  |
| RHD4CZ9L05ST1201 |  | Bedding works for GRP Pipe Line 500 mm - (RD-L-5)-Z9-L05-ST | 2d | 2026-09-22 A | 2026-09-24 A | RHD4CZ9L05ST1101 | 100% |  |
| RHD4CZ9L05ST1301 |  | Installing for GRP Pipe Line 500 mm - (RD-L-5)-Z9-L05-ST | 2d | 2026-09-24 A | 2026-09-26 A | RHD4PRSHLSTAGST1008, RHD4CZ9L05ST1201, RHD4CZ9L05ST1302, RHD4PRSHLDOSST1608, RHD4PRSHLPOST1000, RHD4PRSHLDOSST1008, RHD4PRSHLDOSST1604, RHD4PRSHLDOSST1004 | 100% |  |
| RHD4CZ9L05ST1501 |  | Backfilling and warning tape works for GRP Pipe Line 500 mm - (RD-L-5)-Z9-L05-ST | 2d | 2026-09-27 A | 2026-09-28 A | RHD4CZ9L05ST1401, RHD4CZ9L05ST1502 | 100% |  |
| RHD4CZ9L05ST1401 |  | Primary Test for GRP Pipe Line 500 mm - (RD-L-5)-Z9-L05-ST | 2d | 2027-04-14 | 2027-04-17 | RHD4CZ9L05ST1301 |  | -138.02d |
|  | 8857 | **RHD4-02-002-L05-(ST)-UPVC Pipes - 300 mm diameter** |  | 2026-09-19 | 2027-04-17 |  |  |  |
| RHD4CZ9L05ST2100 |  | Excavation works for UPVC Pipe Line 300 mm - (RD-L-5)-Z9-L05-ST | 2d | 2026-09-19 A | 2026-09-20 A | RHD4ENSDZ9APPST110, RHD4CZ9L05ST1101 | 100% |  |
| RHD4CZ9L05ST2200 |  | Bedding works for UPVC Pipe Line 300 mm - (RD-L-5)-Z9-L05-ST | 2d | 2026-10-03 A | 2026-10-17 A | RHD4CZ9L05ST2100 | 100% |  |

| ID | WBS | Task | Duration | Start | Finish | Predecessors | Complete | Total float |
| --- | --- | --- | --- | --- | --- | --- | --- | --- |
| RHD4CZ9L05ST2300 |  | Installing for UPVC Pipe Line 300 mm - (RD-L-5)-Z9-L05-ST | 2d | 2026-10-05 A | 2026-10-19 A | RHD4PRSHLDOSST1108, RHD4PRSHLSTAGST1108, RHD4CZ9L05ST2200, RHD4CZ9L05ST7300 | 100% |  |
| RHD4CZ9L05ST2500 |  | Backfilling and warning tape works for UPVC Pipe Line 300 mm - (RD-L-5)-Z9-L05-ST | 2d | 2026-10-11 A | 2026-10-21 A | RHD4CZ9L05ST2400, RHD4CZ9L05ST6100, RHD4CZ9L05ST1501 | 100% |  |
| RHD4CZ9L05ST2400 |  | Primary Test for UPVC Pipe Line 300 mm - (RD-L-5)-Z9-L05-ST | 2d | 2027-04-14 | 2027-04-17 | RHD4CZ9L05ST2300 |  | -138.02d |
|  | 8865 | **RHD4-02-002-L05-(ST)-Concrete Encasement** |  | 2027-04-14 | 2027-04-17 |  |  |  |
| RHD4CZ9L05ST6100 |  | Pipe Encasement for Storm Pipelines - (RD-L-5)-Z9-L05-ST | 2d | 2027-04-14 | 2027-04-17 | RHD4CZ9L05ST2300 SS, RHD4CZ9L05ST2300 FF, RHD4CZ9L05ST2200 |  | -138.02d |
|  | 8866 | **RHD4-02-002-Z9-L05-Catch Basin - ST** |  | 2026-09-19 | 2027-02-03 |  |  |  |
|  | 8867 | **RHD4-02-002-L05-(ST)-Single Catch Basin Works** |  | 2026-09-19 | 2027-02-03 |  |  |  |
| RHD4CZ9L05ST7100 |  | Excavation works for Single Catch Basin - (RD-L-5)-Z9-L05-ST | 2d | 2026-09-19 A | 2026-09-20 A | RHD4ENSDZ9APPST110, RHD4PRSHLDOSST1308 | 100% |  |
| RHD4CZ9L05ST7200 |  | PC Blinding, Installation and Pipe connection for Single Catch Basin - (RD-L-5)-Z9-L05-ST | 2d | 2026-10-27 A | 2027-01-27 | RHD4CZ9L05ST7100 |  | -149d |
| RHD4CZ9L05ST7300 |  | Rings & C.Slab & Final Backfill for Single Catch Basin - (RD-L-5)-Z9-L05-ST | 2d | 2026-10-29 A | 2027-01-30 | RHD4PRSHLDOSST1308, RHD4PRSHLSTAGST1308, RHD4CZ9L05ST7200 |  | -149d |
| RHD4CZ9L05ST7400 |  | Steel Cover for Single Catch Basin - (RD-L-5)-Z9-L05-ST | 2d | 2027-01-31 | 2027-02-01 | RHD4PRSHLDOSST1708, RHD4CZ9L05ST7300 |  | -149d |
| RHD4CZ9L05ST7500 |  | Finishing and Insulation works for Single Catch Basin - (RD-L-5)-Z9-L05-ST | 2d | 2027-02-02 | 2027-02-03 | RHD4CZ9L05ST7400 |  | -149d |
|  | 8891 | **RHD4-02-002-Z9-L05-Sewage Network - SW** |  | 2027-04-17 | 2027-05-12 |  |  |  |
|  | 8896 | **RHD4-02-002-L05-(SW)-GRP Pipes - 700 mm diameter** |  |  |  |  |  |  |
|  | 1895 | **RHD4-02-002-L05-(SW)-GRP Pipes - 500 mm diameter** |  | 2027-04-17 | 2027-04-28 |  |  |  |
| RHD4CZ9L05SW1102 |  | Excavation works for GRP Pipe Line 500 mm - (RD-L-5)-Z9-L05-SW | 2d | 2027-04-17 | 2027-04-19 | RHD4CZ9L05ST2500 |  | -138.02d |
| RHD4CZ9L05SW1202 |  | Bedding works for GRP Pipe Line 500 mm - (RD-L-5)-Z9-L05-SW | 2d | 2027-04-19 | 2027-04-21 | RHD4CZ9L05SW1102 |  | -138.02d |
| RHD4CZ9L05SW1302 |  | Installing for GRP Pipe Line 500 mm - (RD-L-5)-Z9-L05-SW | 2d | 2027-04-21 | 2027-04-24 | RHD4CZ9L05SW1202 |  | -138.02d |
| RHD4CZ9L05SW1402 |  | Primary Test for GRP Pipe Line 500 mm - (RD-L-5)-Z9-L05-SW | 2d | 2027-04-24 | 2027-04-26 | RHD4CZ9L05SW1302 |  | -138.02d |
| RHD4CZ9L05SW1502 |  | Backfilling and warning tape works for GRP Pipe Line 500 mm - (RD-L-5)-Z9-L05-SW | 2d | 2027-04-26 | 2027-04-28 | RHD4CZ9L05SW1402 |  | -138.02d |
|  | 3794 | **RHD4-02-002-L05-(SW)-MH Works - 1200 mm diameter** |  | 2027-04-19 | 2027-05-12 |  |  |  |
| RHD4CZ9L05SW3100 |  | Excavation and PC Blinding works for MH 1200 mm - (RD-L-5)-Z9-L05-SW | 3d | 2027-04-19 | 2027-04-22 | RHD4CZ9L05SW1102 |  | -138.02d |
| RHD4CZ9L05SW3200 |  | Installation of Base for MH 1200 mm - (RD-L-5)-Z9-L05-SW | 5d | 2027-04-22 | 2027-04-28 | RHD4CZ9L05SW3100 |  | -138.02d |
| RHD4CZ9L05SW3300 |  | MH Ring and C.Slab works and Backfilling works for MH 1200 mm - (RD-L-5)-Z9-L05-SW | 5d | 2027-04-28 | 2027-05-04 | RHD4CZ9L05SW3200 |  | -138.02d |
| RHD4CZ9L05SW3400 |  | Steel Cover for MH 1200 mm - (RD-L-5)-Z9-L05-SW | 2d | 2027-05-04 | 2027-05-06 | RHD4CZ9L05SW3300 |  | -138.02d |
| RHD4CZ9L05SW3500 |  | Finishing, Benching, Testing works for MH 1200 mm - (RD-L-5)-Z9-L05-SW | 5d | 2027-05-06 | 2027-05-12 | RHD4CZ9L05SW3400 |  | -138.02d |
|  | 8903 | **RHD4-02-002-L05-(SW)-MH Works - 1500 mm diameter** |  |  |  |  |  |  |
|  | 8900 | **RHD4-02-002-L05-(SW)-Concrete Encasement** |  |  |  |  |  |  |
|  | 8928 | **RHD4-02-002-Z9-L05-Potable Network - PT** |  | 2027-04-28 | 2027-05-26 |  |  |  |
|  | 8930 | **RHD4-02-002-L05-(PT)-HDPE Pipes - 160 mm diameter** |  | 2027-04-28 | 2027-05-10 |  |  |  |
| RHD4CZ9L05PT1101 |  | Excavation works for HDPE Pipline 160 mm - (RD-L-5)-Z9-L05-PT | 2d | 2027-04-28 | 2027-05-01 | RHD4ENSDZ9APPPT130, RHD4ENMSPT2000, RHD4CZ9L05SW1502 |  | -138.02d |
| RHD4CZ9L05PT1201 |  | Bedding works for HDPE Pipline 160 mm - (RD-L-5)-Z9-L05-PT | 2d | 2027-05-01 | 2027-05-03 | RHD4CZ9L05PT1101 |  | -138.02d |
| RHD4CZ9L05PT1301 |  | Installing for HDPE Pipline 160 mm - (RD-L-5)-Z9-L05-PT | 2d | 2027-05-03 | 2027-05-05 | RHD4PRSHLDOSPT1000, RHD4PRSHLSTAGPT1000, RHD4CZ9L05PT1201 |  | -138.02d |
| RHD4CZ9L05PT1401 |  | Primary Test for HDPE Pipline 160 mm - (RD-L-5)-Z9-L05-PT | 2d | 2027-05-05 | 2027-05-08 | RHD4CZ9L05PT1301 |  | -138.02d |
| RHD4CZ9L05PT1501 |  | Backfilling and warning tape works for HDPE Pipline 160 mm - (RD-L-5)-Z9-L05-PT | 2d | 2027-05-08 | 2027-05-10 | RHD4CZ9L05PT1401 |  | -138.02d |
|  | 6483 | **RHD4-02-002-L05-(PT)-Concrete Encasement** |  | 2027-05-03 | 2027-05-05 |  |  |  |
| RHD4CZ9L05PT5100 |  | Pipe Encasement for Potable Pipelines - (RD-L-5)-Z9-L05-PT | 2d | 2027-05-03 | 2027-05-05 | RHD4CZ9L05PT1201 |  | -131.02d |
|  | 8939 | **RHD4-02-002-L05-(PT)-Air Valve Chambers** |  | 2027-05-01 | 2027-05-10 |  |  |  |
| RHD4CZ9L05PT2102 |  | Excavation and Bedding for Air Valve Chambers for Potable Water Network - (RD-L-5)-Z9-L05-PT | 2d | 2027-05-01 | 2027-05-03 | RHD4ENSDZ9APPPT130, RHD4CZ9L05PT1101 |  | -138.02d |
| RHD4CZ9L05PT2202 |  | PC works for Air Valve Chambers for Potable Water Network - (RD-L-5)-Z9-L05-PT | 2d | 2027-05-03 | 2027-05-05 | RHD4CZ9L05PT2102 |  | -138.02d |
| RHD4CZ9L05PT2302 |  | Installation for Air Valve Chambers for Potable Water Network - (RD-L-5)-Z9-L05-PT | 2d | 2027-05-05 | 2027-05-08 | RHD4PRSHLDOSPT1100, RHD4PRSHLDOSPT1400, RHD4PRSHLSTAGPT1100, RHD4PRSHLSTAGPT1400, RHD4CZ9L05PT2202 |  | -138.02d |
| RHD4CZ9L05PT2402 |  | Backfilling works for Air Valve Chambers for Potable Water Network - (RD-L-5)-Z9-L05-PT | 2d | 2027-05-08 | 2027-05-10 | RHD4CZ9L05PT2302 |  | -138.02d |
|  | 8940 | **RHD4-02-002-L05-(PT)-Air Valves** |  | 2027-05-05 | 2027-05-10 |  |  |  |
| RHD4CZ9L05PT3103 |  | Installation for Air Valves for Potable Water Network - (RD-L-5)-Z9-L05-PT | 2d | 2027-05-05 | 2027-05-08 | RHD4PRSHLDOSPT1200, RHD4PRSHLSTAGPT1200, RHD4CZ9L05PT1301 |  | -138.02d |
| RHD4CZ9L05PT3203 |  | Stem and Service box for Air Valves for Potable Water Network - (RD-L-5)-Z9-L05-PT | 2d | 2027-05-08 | 2027-05-10 | RHD4PRSHLDOSPT1300, RHD4PRSHLSTAGPT1300, RHD4CZ9L05PT3103 |  | -138.02d |
|  | 8941 | **RHD4-02-002-L05-(PT)-Fire Hydrant** |  | 2027-05-10 | 2027-05-26 |  |  |  |
| RHD4CZ9L05PT4100 |  | Excavation and Bedding and Pipe Installation for Fire Hydrant - (RD-L-5)-Z9-L05-PT | 2d | 2027-05-10 | 2027-05-12 | RHD4ENSDZ9APPPT130, RHD4CZ9L05PT1501 |  | -130.02d |
| RHD4CZ9L05PT4200 |  | Valve Installation for Fire Hydrant - (RD-L-5)-Z9-L05-PT | 2d | 2027-05-12 | 2027-05-19 | RHD4CZ9L05PT4100 |  | -130.02d |
| RHD4CZ9L05PT4300 |  | Stem for Fire Hydrant - (RD-L-5)-Z9-L05-PT | 2d | 2027-05-19 | 2027-05-22 | RHD4CZ9L05PT4200 |  | -130.02d |
| RHD4CZ9L05PT4400 |  | Fire Installation for Fire Hydrant - (RD-L-5)-Z9-L05-PT | 2d | 2027-05-22 | 2027-05-24 | RHD4PRSHLDOSPT1500, RHD4PRSHLSTAGPT1500, RHD4CZ9L05PT4300 |  | -130.02d |
| RHD4CZ9L05PT4500 |  | Protection Barriers for Fire Hydrant - (RD-L-5)-Z9-L05-PT | 2d | 2027-05-24 | 2027-05-26 | RHD4CZ9L05PT4400 |  | -130.02d |
|  | 8934 | **RHD4-02-002-L05-(PT)-Gate Valves (Direct Buried)** |  | 2027-05-03 | 2027-05-12 |  |  |  |
| RHD4CZ9L05PT3100 |  | Installation for Direct Buried Gate Valves - (RD-L-5)-Z9-L05-PT | 2d | 2027-05-03 | 2027-05-05 | RHD4PRSHLDOSPT1200, RHD4PRSHLSTAGPT1200, RHD4CZ9L05PT1301 FF, RHD4CZ9L05PT1301 SS |  | -134.02d |
| RHD4CZ9L05PT3200 |  | Stem and Service box for Direct Buried Gate Valves - (RD-L-5)-Z9-L05-PT | 2d | 2027-05-10 | 2027-05-12 | RHD4PRSHLDOSPT1300, RHD4PRSHLSTAGPT1300, RHD4CZ9L05PT3100, RHD4CZ9L05PT1501 |  | -138.02d |
|  | 8943 | **RHD4-02-002-Z9-L05-Irrigation Network - IRR** |  | 2027-05-10 | 2027-05-26 |  |  |  |
|  | 8951 | **RHD4-02-002-L05-(IRR)-HDPE Pipes - 500 mm diameter** |  | 2027-05-10 | 2027-05-26 |  |  |  |
| RHD4CZ9L05IRR1107 |  | Excavation works for HDPE Pipline 500 mm - (RD-L-5)-Z9-L05-IRR | 2d | 2027-05-10 | 2027-05-12 | RHD4ENSDZ9APPIRR140, RHD4ENMSRR2000, RHD4CZ9L05PT1501 |  | -131.02d |
| RHD4CZ9L05IRR1207 |  | Bedding works for HDPE Pipline 500 mm - (RD-L-5)-Z9-L05-IRR | 2d | 2027-05-12 | 2027-05-19 | RHD4CZ9L05IRR1107 |  | -131.02d |
| RHD4CZ9L05IRR1307 |  | Installing for HDPE Pipline 500 mm - (RD-L-5)-Z9-L05-IRR | 2d | 2027-05-19 | 2027-05-22 | RHD4PRSHLDOSIRR1000, RHD4PRSHLSTAGIRR1000, RHD4CZ9L05IRR1207 |  | -131.02d |
| RHD4CZ9L05IRR1407 |  | Primary Test for HDPE Pipline 500 mm - (RD-L-5)-Z9-L05-IRR | 2d | 2027-05-22 | 2027-05-24 | RHD4CZ9L05IRR1307 |  | -131.02d |
| RHD4CZ9L05IRR1507 |  | Backfilling and warning tape works for HDPE Pipline 500 mm - (RD-L-5)-Z9-L05-IRR | 2d | 2027-05-24 | 2027-05-26 | RHD4CZ9L05IRR1407 |  | -131.02d |
|  | 8977 | **RHD4-02-002-Z9-L05-Medium Voltage Network - MV** |  | 2027-02-11 | 2027-02-20 |  |  |  |
|  | 8978 | **RHD4-02-002-L05-(MV)-Medium Voltage cable trench** |  |  |  |  |  |  |
|  | 8979 | **RHD4-02-002-L05-(MV)-Medium Voltage duct banks** |  | 2027-02-11 | 2027-02-20 |  |  |  |
| RHD4CZ9L05MV2100 |  | Excavation of Duct Banks for Medium Voltage Network - (RD-L-5)-Z9-L05-MV | 2d | 2027-02-11 | 2027-02-13 | RHD4ENSDZ9APPMV150, RHD4CZ9L05RD3100 |  | -149d |
| RHD4CZ9L05MV2200 |  | Installation of Duct Banks for Medium Voltage Network - (RD-L-5)-Z9-L05-MV | 2d | 2027-02-14 | 2027-02-15 | RHD4PRSHLDOSMV1000, RHD4PRSHLSTAGMV1000, RHD4CZ9L05MV2100 |  | -149d |
| RHD4CZ9L05MV2300 |  | Pouring of Duct Banks for Medium Voltage Network - (RD-L-5)-Z9-L05-MV | 2d | 2027-02-16 | 2027-02-17 | RHD4CZ9L05MV2200 |  | -149d |
| RHD4CZ9L05MV2400 |  | Backfilling of Duct Banks for Medium Voltage Network - (RD-L-5)-Z9-L05-MV | 2d | 2027-02-18 | 2027-02-20 | RHD4CZ9L05MV2300 |  | -149d |
|  | 8980 | **RHD4-02-002-L05-(MV)-Medium Voltage cables 3Cx 500 mm²** |  | 2027-02-11 | 2027-02-15 |  |  |  |
| RHD4CZ9L05MV3100 |  | Installation of Medium Voltage Cables 3Cx 500 mm² - (RD-L-5)-Z9-L05-MV | 2d | 2027-02-11 | 2027-02-13 | RHD4PRSHLDOSMV1100, RHD4ENMSMV2000, RHD4ENMSMV2010, RHD4PRSHLSTAGMV1100, RHD4CZ9L05RD3100 |  | -148d |

| ID | WBS | Task | Duration | Start | Finish | Predecessors | Total float |
| --- | --- | --- | --- | --- | --- | --- | --- |
| RHD4CZ9L05MV3300 |  | Testing of Medium Voltage Cables 3Cx 500 mm² - (RD-L-5)-Z9-L05-MV | 2d | 2027-02-14 | 2027-02-15 | RHD4CZ9L05MV3100 | -148d |
|  | 8984 | **RHD4-02-002-Z9-L05-Low Voltage Network - LV** |  | 2027-05-26 | 2027-06-09 |  |  |
|  | 8985 | **RHD4-02-002-L05-(LV)-Low Voltage duct banks** |  |  |  |  |  |
|  | 8987 | **RHD4-02-002-L05-(LV)-Low Voltage cables** |  | 2027-05-26 | 2027-06-09 |  |  |
| RHD4CZ9L05LV3100 |  | Excavation for Low Voltage Cables for Low Voltage Network - (RD-L-5)-Z9-L05-LV | 4d | 2027-05-26 | 2027-05-31 | RHD4ENSDZ9APPLV160, RHD4CZ9L05MV3300, RHD4CZ9L05IRR1507 | -131.02d |
| RHD4CZ9L05LV3200 |  | Cable Laying of Low Voltage Cables for Low Voltage Network - (RD-L-5)-Z9-L05-LV | 3d | 2027-05-31 | 2027-06-03 | RHD4PRSHLDOSLV1100, RHD4ENMSLV2000, RHD4ENMSLV2010, RHD4PRSHLSTAGLV1100, RHD4CZ9L05LV3100 | -131.02d |
| RHD4CZ9L05LV3300 |  | Warning tape and Backfill for Low Voltage Cables for Low Voltage Network - (RD-L-5)-Z9-L05-LV | 3d | 2027-06-03 | 2027-06-07 | RHD4CZ9L05LV3200 | -131.02d |
| RHD4CZ9L05LV3400 |  | Testing of Low Voltage Cables for Low Voltage Network - (RD-L-5)-Z9-L05-LV | 2d | 2027-06-07 | 2027-06-09 | RHD4CZ9L05LV3300 | -131.02d |
|  | 8990 | **RHD4-02-002-Z9-L05-Street Lighting Network - SL** |  | 2027-05-10 | 2027-07-08 |  |  |
|  | 8991 | **RHD4-02-002-L05-(SL)-Street Lighting duct banks** |  | 2027-05-10 | 2027-05-24 |  |  |
| RHD4CZ9L05SL2100 |  | Excavation of Duct Banks for Street Lighting Network - (RD-L-5)-Z9-L05-SL | 2d | 2027-05-10 | 2027-05-12 | RHD4ENSDZ9APPSL170, RHD4CZ9L05IRR1107 SS, RHD4CZ9L05MV2400 | -117.02d |
| RHD4CZ9L05SL2200 |  | Installation of Duct Banks for Street Lighting Network - (RD-L-5)-Z9-L05-SL | 2d | 2027-05-12 | 2027-05-19 | RHD4PRSHLDOSSL1000, RHD4PRSHLSTAGSL1000, RHD4CZ9L05SL2100 | -117.02d |
| RHD4CZ9L05SL2300 |  | Pouring of Duct Banks for Street Lighting Network - (RD-L-5)-Z9-L05-SL | 2d | 2027-05-19 | 2027-05-22 | RHD4CZ9L05SL2200 | -117.02d |
| RHD4CZ9L05SL2400 |  | Backfilling of Duct Banks for Street Lighting Network - (RD-L-5)-Z9-L05-SL | 2d | 2027-05-22 | 2027-05-24 | RHD4CZ9L05SL2300 | -117.02d |
|  | 8992 | **RHD4-02-002-L05-(SL)-Street Lighting Drawpit** |  | 2027-06-09 | 2027-06-14 |  |  |
| RHD4CZ9L05SL5100 |  | Excavation of Drawpit size 600x600x900mm for Street Lighting Network - (RD-L-5)-Z9-L05-SL | 2d | 2027-06-09 | 2027-06-12 | RHD4ENSDZ9APPSL170, RHD4CZ9L05SL2300, RHD4CZ9L05LV3400 | -131.02d |
| RHD4CZ9L05SL5200 |  | Installation of Drawpit size 600x600x900mm for Street Lighting Network - (RD-L-5)-Z9-L05-SL | 2d | 2027-06-12 | 2027-06-14 | RHD4PRSHLDOSSL1400, RHD4PRSHLSTAGSL1400, RHD4CZ9L05SL5100 | -131.02d |
|  | 8993 | **RHD4-02-002-L05-(SL)-Street Lighting cables** |  | 2027-06-14 | 2027-06-24 |  |  |
| RHD4CZ9L05SL3100 |  | Excavation for Street Lighting Cables for Street Lighting Network - (RD-L-5)-Z9-L05-SL | 3d | 2027-06-14 | 2027-06-17 | RHD4ENSDZ9APPSL170, RHD4CZ9L05SL5200 | -131.02d |
| RHD4CZ9L05SL3200 |  | Cable Laying of Street Lighting Cables for Street Lighting Network - (RD-L-5)-Z9-L05-SL | 2d | 2027-06-17 | 2027-06-20 | RHD4PRSHLDOSSL1100, RHD4ENMSSL2000, RHD4ENMSSL2010, RHD4PRSHLSTAGSL1100, RHD4CZ9L05SL3100 | -131.02d |
| RHD4CZ9L05SL3300 |  | Warning tape and Backfill for Street Lighting Cables for Street Lighting Network - (RD-L-5)-Z9-L05-SL | 2d | 2027-06-20 | 2027-06-22 | RHD4CZ9L05SL3200 | -131.02d |
| RHD4CZ9L05SL3400 |  | Testing of Street Lighting Cables for Street Lighting Network - (RD-L-5)-Z9-L05-SL | 2d | 2027-06-22 | 2027-06-24 | RHD4CZ9L05SL3300 | -131.02d |
|  | 8994 | **RHD4-02-002-L05-(SL)-Street Lighting Poles** |  | 2027-06-24 | 2027-07-06 |  |  |
| RHD4CZ9L05SL1100 |  | Excavation for RC Base for Lighting Poles for Street Lighting Network - (RD-L-5)-Z9-L05-SL | 2d | 2027-06-24 | 2027-06-27 | RHD4ENSDZ9APPSL170, RHD4CZ9L05SL3400 | -131.02d |
| RHD4CZ9L05SL1200 |  | Installation for RC Base for Lighting Poles for Street Lighting Network - (RD-L-5)-Z9-L05-SL | 2d | 2027-06-27 | 2027-06-29 | RHD4CZ9L05SL1100 | -131.02d |
| RHD4CZ9L05SL1300 |  | Backfill for RC Base for Lighting Poles for Street Lighting Network - (RD-L-5)-Z9-L05-SL | 2d | 2027-06-29 | 2027-07-01 | RHD4CZ9L05SL1200 | -131.02d |
| RHD4CZ9L05SL1400 |  | Installation for Lighting Poles for Street Lighting Network - (RD-L-5)-Z9-L05-SL | 2d | 2027-07-01 | 2027-07-04 | RHD4PRSHLDOSSL1200, RHD4ENMSSL2000, RHD4ENMSSL2010, RHD4PRSHLSTAGSL1200, RHD4CZ9L05SL1300 | -131.02d |
| RHD4CZ9L05SL1500 |  | Luminaire Installation for Lighting Poles for Street Lighting Network - (RD-L-5)-Z9-L05-SL | 2d | 2027-07-04 | 2027-07-06 | RHD4PRSHLDOSSL1300, RHD4PRSHLSTAGSL1300, RHD4CZ9L05SL1400 | -131.02d |
|  | 8996 | **RHD4-02-002-L05-(SL)-Street Lighting Earthing System** |  | 2027-07-06 | 2027-07-08 |  |  |
| RHD4CZ9L05SL6100 |  | Installation of Earthing for Lighting Poles and Fedder Pillers for Street Lighting Network - (RD-L-5)-Z9-L05-SL | 2d | 2027-07-06 | 2027-07-08 | RHD4ENMSER2000, RHD4ENMSER2010, RHD4CZ9L05SL1500 | -131.02d |
|  | 9002 | **RHD4-02-002-Z9-L05-Telecommunications Network - TC** |  | 2027-07-08 | 2027-07-25 |  |  |
|  | 9003 | **RHD4-02-002-L05-(TC)-Telecommunications Ducts** |  | 2027-07-08 | 2027-07-20 |  |  |
| RHD4CZ9L05TC2100 |  | Excavation of HDPE Ducts for Telecom Network - (RD-L-5)-Z9-L05-TC | 3d | 2027-07-08 | 2027-07-12 | RHD4ENSDZ9APPTC190, RHD4CZ9L05SL6100 | -131.02d |
| RHD4CZ9L05TC2200 |  | Installation of HDPE Ducts for Telecom Network - (RD-L-5)-Z9-L05-TC | 4d | 2027-07-12 | 2027-07-17 | RHD4PRSHLDOSTC1000, RHD4PRSHLSTAGTC1000, RHD4CZ9L05TC2100 | -131.02d |
| RHD4CZ9L05TC2400 |  | Backfilling of HDPE Ducts for Telecom Network - (RD-L-5)-Z9-L05-TC | 3d | 2027-07-17 | 2027-07-20 | RHD4CZ9L05TC2200 | -131.02d |
|  | 9004 | **RHD4-02-002-L05-(TC)-Telecommunications Manholes** |  | 2027-07-20 | 2027-07-25 |  |  |
| RHD4CZ9L05TC5100 |  | Excavation for Manholes for Telecom Network - (RD-L-5)-Z9-L05-TC | 2d | 2027-07-20 | 2027-07-22 | RHD4ENSDZ9APPTC190, RHD4CZ9L05TC2400 | -131.02d |
| RHD4CZ9L05TC5200 |  | Installation of Manholes for Telecom Network - (RD-L-5)-Z9-L05-TC | 2d | 2027-07-22 | 2027-07-25 | RHD4PRSHLDOSTC1200, RHD4PRSHLSTAGTC1200, RHD4CZ9L05TC5100 | -131.02d |
|  | 9006 | **RHD4-02-002-Z9-L05-Information and Communication Technologies - ICT** |  | 2027-07-25 | 2027-08-01 |  |  |
|  | 9007 | **RHD4-02-002-L05-(ICT)-Information and Communication Technologies Ducts** |  | 2027-07-25 | 2027-08-01 |  |  |
| RHD4CZ9L05ICT2100 |  | Excavation of HDPE Ducts for ICT Network - (RD-L-5)-Z9-L05-ICT | 2d | 2027-07-25 | 2027-07-27 | RHD4ENSDZ9APPICT200, RHD4CZ9L05TC5200 | -131.02d |
| RHD4CZ9L05ICT2200 |  | Installation of HDPE Ducts for ICT Network - (RD-L-5)-Z9-L05-ICT | 2d | 2027-07-27 | 2027-07-29 | RHD4PRSHLDOSICT1000, RHD4PRSHLSTAGICT1000, RHD4CZ9L05ICT2100 | -131.02d |
| RHD4CZ9L05ICT2400 |  | Backfilling of HDPE Ducts for ICT Network - (RD-L-5)-Z9-L05-ICT | 2d | 2027-07-29 | 2027-08-01 | RHD4CZ9L05ICT2200 | -131.02d |
|  | 9008 | **RHD4-02-002-L05-(ICT)-Information and Communication Technologies Manholes** |  |  |  |  |  |
|  | 8997 | **RHD4-02-002-Z9-L05-Landscape Network - LS** |  |  |  |  |  |
|  | 8998 | **RHD4-02-002-L05-(LS)-Landscape Lighting cables** |  |  |  |  |  |
|  | 8999 | **RHD4-02-002-L05-(LS)-Landscape Feeder Pillars** |  |  |  |  |  |
|  | 9000 | **RHD4-02-002-L05-(LS)-Landscape Bollard Poles** |  |  |  |  |  |
|  | 9001 | **RHD4-02-002-L05-(LS)-Landscape Feeder Pillars Earthing** |  |  |  |  |  |
|  | 9010 | **RHD4-02-002-Z9-L05-Security Network - CCTV** |  |  |  |  |  |
|  | 9011 | **RHD4-02-002-L05-(CCTV)-Civil Works** |  |  |  |  |  |
|  | 9027 | **RHD4-02-002-Z9-L06** |  | 2026-08-29 | 2027-10-30 |  |  |
|  | 9058 | **RHD4-02-002-Z9-L06-Crossings Sewage Network - SWCr** |  |  |  |  |  |
|  | 9068 | **RHD4-02-002-L06-(SWCr)-MH Works - 1200 mm diameter** |  |  |  |  |  |
|  | 9069 | **RHD4-02-002-L06-(SWCr)-MH Works - 1200 mm diameter with Back drop** |  |  |  |  |  |
|  | 9064 | **RHD4-02-002-L06-(SWCr)-UPVC Pipes - 200 mm diameter** |  |  |  |  |  |
|  | 9102 | **RHD4-02-002-Z9-L06-Crossings Potable Network - PTCr** |  |  |  |  |  |
|  | 9103 | **RHD4-02-002-L06-(PTCr)-HDPE Pipes - 110 mm diameter** |  |  |  |  |  |
|  | 9108 | **RHD4-02-002-L06-(PTCr)-Gate Valves (Direct Buried)** |  |  |  |  |  |
|  | 9149 | **RHD4-02-002-Z9-L06-Crossings Irrigation Network - IRRC** |  |  |  |  |  |
|  | 9150 | **RHD4-02-002-L06-(IRRC)-HDPE Pipes - 160 mm diameter** |  |  |  |  |  |
|  | 9158 | **RHD4-02-002-L06-(IRRC)-Gate Valves (Direct Buried)** |  |  |  |  |  |
|  | 9206 | **RHD4-02-002-Z9-L06-Road Works - RD** |  | 2027-01-28 | 2027-10-30 |  |  |
|  | 9207 | **RHD4-02-002-L06-(RD)-Subgrade** |  | 2027-01-28 | 2027-02-07 |  |  |
| RHD4CZ9L06RD1100 |  | Supply, lay and compaction subgrade compacted thickness 300 mm for Roads - (RD-L-6)-Z9-L06-RD | 9d | 2027-01-28 | 2027-02-07 | RHD4ENSDZ9APPEW100, RHD4ENSDZ9APPRD220, RHD4CZ9L06ST1506 | -146d |
|  | 9208 | **RHD4-02-002-L06-(RD)-Aggregate Base Course** |  | 2027-02-08 | 2027-02-15 |  |  |
| RHD4CZ9L06RD2100 |  | Supply, lay and compaction Aggregate base course compacted thickness 300 mmfor Roads - (RD-L-6)-Z9-L06-RD | 7d | 2027-02-08 | 2027-02-15 | RHD4PRSHLDOSRD1000, RHD4PRSHLSTAGRD1000, RHD4CZ9L06RD1100 | -146d |
|  | 9209 | **RHD4-02-002-L06-(RD)-Bituminous base course Two Layers, including (MC1)&(RC2)** |  | 2027-02-27 | 2027-09-26 |  |  |
| RHD4CZ9L06RD3100 |  | Supply, lay and Asphaltic base course including Prime Coat (MC1) for 1st Layer - (RD-L-6)-Z9-L06-RD | 2d | 2027-02-27 | 2027-02-28 | RHD4PRSHLDOSRD1100, RHD4ENMSASPH2000, RHD4ENMSASPH2010, RHD4PRSHLSTAGRD1100, RHD4CZ9L06RD2100, RHD4CZ4C031RD3100 | -154d |
| RHD4CZ9L06RD3200 |  | Supply, lay and Asphaltic base course including Tack Coat (RC2) for 2nd Layer - (RD-L-6)-Z9-L06-RD | 2d | 2027-09-22 | 2027-09-26 | RHD4PRSHLDOSRD1100, RHD4PRSHLSTAGRD1100, RHD4CZ9L06ICT5200 | -102.02d |

| ID | WBS | Task | Duration | Start | Finish | Predecessors | Complete | Total float |
| --- | --- | --- | --- | --- | --- | --- | --- | --- |
|  | 9211 | **RHD4-02-002-L06-(RD)-Precast Concrete Curb** |  | 2027-09-26 | 2027-09-30 |  |  |  |
| RHD4CZ9L06RD5100 |  | Supply and installation Precast Concrete Kerb for Roads - (RD-L-6)-Z9-L06-RD | 4d | 2027-09-26 | 2027-09-30 | RHD4PRSHLDOSRD1200, RHD4ENMSRD2000, RHD4ENMSRD2010, RHD4PRSHLSTAGRD1200, RHD4CZ9L06RD3200 |  | -102.02d |
|  | 9214 | **RHD4-02-002-L06-(RD)-Traffic Signage** |  | 2027-09-30 | 2027-10-10 |  |  |  |
| RHD4CZ9L06RD8100 |  | Installation of Traffic Signage for Road Network - (RD-L-6)-Z9-L06-RD | 8d | 2027-09-30 | 2027-10-10 | RHD4PRSHLDOSRD1600, RHD4PRSHLSTAGRD1600, RHD4CZ9L06RD5100 |  | -102.02d |
|  | 9212 | **RHD4-02-002-L06-(RD)-Precast Interlocking Block Pavers** |  | 2027-10-10 | 2027-10-20 |  |  |  |
| RHD4CZ9L06RD6100 |  | Interlocking block pavers for sidewalk-footpath for Side walks and Parking areas - (RD-L-6)-Z9-L06-RD | 9d | 2027-10-10 | 2027-10-20 | RHD4PRSHLDOSRD1300, RHD4PRSHLDOSRD1400, RHD4ENMSRD2000, RHD4ENMSRD2010, RHD4PRSHLSTAGRD1300, RHD4PRSHLSTAGRD1400, RHD4CZ9L06RD8100 |  | -102.02d |
|  | 9210 | **RHD4-02-002-L06-(RD)-Bituminous concrete wearing course including tack coat (RC2)** |  | 2027-10-20 | 2027-10-23 |  |  |  |
| RHD4CZ9L06RD4100 |  | Supply, lay and compaction Asphaltic wearing course including tack Coat (RC2)for Road Network - (RD-L-6)-Z9-L06-RD | 2d | 2027-10-20 | 2027-10-23 | RHD4CZ9L06RD5100, RHD4CZ9L06RD6100 |  | -102.02d |
|  | 9213 | **RHD4-02-002-L06-(RD)-Pavement Marking** |  | 2027-10-23 | 2027-10-30 |  |  |  |
| RHD4CZ9L06RD7100 |  | Pavement Markings for Road Network - (RD-L-6)-Z9-L06-RD | 6d | 2027-10-23 | 2027-10-30 | RHD4PRSHLDOSRD1500, RHD4PRSHLSTAGRD1500, RHD4CZ9L06RD4100 |  | -102.02d |
|  | 9031 | **RHD4-02-002-Z9-L06-Storm Network - ST** |  | 2026-08-29 | 2027-05-10 |  |  |  |
|  | 5251 | **RHD4-02-002-L06-(ST)-GRP Pipes - 600 mm diameter** |  | 2026-08-30 | 2027-04-19 |  |  |  |
| RHD4CZ9L06ST1102 |  | Excavation works for GRP Pipe Line 600 mm - (RD-L-6)-Z9-L06-ST | 2d | 2026-08-30 A | 2026-08-31 A | RHD4CZ9L06ST1103 | 100% |  |
| RHD4CZ9L06ST1202 |  | Bedding works for GRP Pipe Line 600 mm - (RD-L-6)-Z9-L06-ST | 2d | 2026-09-01 A | 2026-09-02 A | RHD4CZ9L06ST1102 | 100% |  |
| RHD4CZ9L06ST1302 |  | Installing for GRP Pipe Line 600 mm - (RD-L-6)-Z9-L06-ST | 2d | 2026-09-05 A | 2026-09-06 A | RHD4CZ9L06ST1202 | 100% |  |
| RHD4CZ9L06ST1502 |  | Backfilling and warning tape works for GRP Pipe Line 600 mm - (RD-L-6)-Z9-L06-ST | 2d | 2026-09-07 A | 2026-09-08 A | RHD4CZ9L06ST1402, RHD4CZ9L06ST1505, RHD4CZ9C071ST1505 | 100% |  |
| RHD4CZ9L06ST1402 |  | Primary Test for GRP Pipe Line 600 mm - (RD-L-6)-Z9-L06-ST | 2d | 2027-04-17 | 2027-04-19 | RHD4CZ9L06ST1302 |  | -90.02d |
|  | 9048 | **RHD4-02-002-L06-(ST)-MH Works - 1200 mm diameter** |  | 2026-09-19 | 2027-05-10 |  |  |  |
| RHD4CZ9L06ST3100 |  | Excavation and PC Blinding works for MH 1200 mm - (RD-L-6)-Z9-L06-ST | 2d | 2026-09-19 A | 2026-09-20 A | RHD4ENSDZ9APPST110, RHD4ENMSST2000, RHD4ENMSST2010, RHD4CZ9L06ST3101 | 100% |  |
| RHD4CZ9L06ST3200 |  | Installation of Base for MH 1200 mm - (RD-L-6)-Z9-L06-ST | 2d | 2026-09-26 A | 2026-10-04 A | RHD4PRSHLSTAGST1608, RHD4CZ9L06ST3100 | 100% |  |
| RHD4CZ9L06ST3300 |  | MH Ring and C.Slab works and Backfilling works for MH 1200 mm - (RD-L-6)-Z9-L06-ST | 2d | 2027-04-25 | 2027-04-27 | RHD4PRSHLDOSST1608, RHD4CZ9L06ST3200 |  | -105.02d |
| RHD4CZ9L06ST3400 |  | Steel Cover for MH 1200 mm - (RD-L-6)-Z9-L06-ST | 2d | 2027-05-05 | 2027-05-08 | RHD4PRSHLDOSST1708, RHD4PRSHLSTAGST1708, RHD4CZ9L06ST3300, RHD4CZ9L06ST2500, RHD4CZ9L06ST1500 |  | -112.02d |
| RHD4CZ9L06ST3500 |  | Finishing, Benching, Testing works for MH 1200 mm - (RD-L-6)-Z9-L06-ST | 2d | 2027-05-08 | 2027-05-10 | RHD4CZ9L06ST3400 |  | -112.02d |
|  | 9049 | **RHD4-02-002-L06-(ST)-MH Works - 1500 mm diameter** |  | 2026-09-19 | 2027-05-03 |  |  |  |
| RHD4CZ9L06ST3101 |  | Excavation and PC Blinding works for MH 1500 mm - (RD-L-6)-Z9-L06-ST | 4d | 2026-09-19 A | 2026-09-22 A | RHD4ENSDZ9APPST110, RHD4ENMSST2000, RHD4CZ9L06ST3102 | 100% |  |
| RHD4CZ9L06ST3201 |  | Installation of Base for MH 1500 mm - (RD-L-6)-Z9-L06-ST | 4d | 2026-09-24 A | 2026-09-30 A | RHD4PRSHLSTAGST1608, RHD4CZ9L06ST3101 | 100% |  |
| RHD4CZ9L06ST3301 |  | MH Ring and C.Slab works and Backfilling works for MH 1500 mm - (RD-L-6)-Z9-L06-ST | 4d | 2026-10-29 A | 2026-11-01 A | RHD4PRSHLDOSST1608, RHD4CZ9L06ST3201 | 100% |  |
| RHD4CZ9L06ST3401 |  | Steel Cover for MH 1500 mm - (RD-L-6)-Z9-L06-ST | 3d | 2027-04-25 | 2027-04-28 | RHD4PRSHLDOSST1708, RHD4PRSHLSTAGST1708, RHD4CZ9L06ST3301 |  | -85.02d |
| RHD4CZ9L06ST3501 |  | Finishing, Benching, Testing works for MH 1500 mm - (RD-L-6)-Z9-L06-ST | 4d | 2027-04-28 | 2027-05-03 | RHD4CZ9L06ST3401 |  | -85.02d |
|  | 9050 | **RHD4-02-002-L06-(ST)-MH Works - 2000 mm diameter** |  | 2026-09-19 | 2027-05-05 |  |  |  |
| RHD4CZ9L06ST3102 |  | Excavation and PC Blinding works for MH 2000 mm - (RD-L-6)-Z9-L06-ST | 2d | 2026-09-19 A | 2026-09-20 A | RHD4ENSDZ9APPST110, RHD4ENMSST2000, RHD4CZ9L06ST2100 | 100% |  |
| RHD4CZ9L06ST3202 |  | Installation of Base for MH 2000 mm - (RD-L-6)-Z9-L06-ST | 2d | 2026-09-30 A | 2026-10-01 A | RHD4PRSHLSTAGST1608, RHD4CZ9L06ST3102 | 100% |  |
| RHD4CZ9L06ST3302 |  | MH Ring and C.Slab works and Backfilling works for MH 2000 mm - (RD-L-6)-Z9-L06-ST | 2d | 2027-04-25 | 2027-04-27 | RHD4PRSHLDOSST1608, RHD4CZ9L06ST3202 |  | -82.02d |
| RHD4CZ9L06ST3402 |  | Steel Cover for MH 2000 mm - (RD-L-6)-Z9-L06-ST | 2d | 2027-04-28 | 2027-05-01 | RHD4PRSHLDOSST1708, RHD4PRSHLSTAGST1708, RHD4CZ9L06ST3302, RHD4CZ9L06ST3401 |  | -83.02d |
| RHD4CZ9L06ST3502 |  | Finishing, Benching, Testing works for MH 2000 mm - (RD-L-6)-Z9-L06-ST | 2d | 2027-05-03 | 2027-05-05 | RHD4CZ9L06ST3402, RHD4CZ9L06ST3501 |  | -85.02d |
|  | 9038 | **RHD4-02-002-L06-(ST)-GRP Pipes - 1000 mm diameter** |  | 2026-08-29 | 2027-01-27 |  |  |  |
| RHD4CZ9L06ST1106 |  | Excavation works for GRP Pipe Line 1000 mm - (RD-L-6)-Z9-L06-ST | 2d | 2026-08-29 A | 2026-08-30 A | RHD4ENSDZ9APPST110, RHD4CZ9L06RW3000, RHD4PRSHLDOSST1308 | 100% |  |
| RHD4CZ9L06ST1206 |  | Bedding works for GRP Pipe Line 1000 mm - (RD-L-6)-Z9-L06-ST | 2d | 2026-08-30 A | 2026-08-31 A | RHD4CZ9L06ST1106 | 100% |  |
| RHD4CZ9L06ST1306 |  | Installing for GRP Pipe Line 1000 mm - (RD-L-6)-Z9-L06-ST | 2d | 2026-09-01 A | 2026-09-02 A | RHD4PRSHLSTAGST1008, RHD4CZ9L06ST1206, RHD4PRSHLDOSST1608, RHD4PRSHLPOST1000, RHD4PRSHLDOSST1008, RHD4PRSHLDOSST1604, RHD4PRSHLDOSST1004 | 100% |  |
| RHD4CZ9L06ST1506 |  | Backfilling and warning tape works for GRP Pipe Line 1000 mm - (RD-L-6)-Z9-L06-ST | 2d | 2026-09-19 A | 2026-09-20 A | RHD4CZ9L06ST1406 | 100% |  |
| RHD4CZ9L06ST1406 |  | Primary Test for GRP Pipe Line 1000 mm - (RD-L-6)-Z9-L06-ST | 2d | 2027-01-26 | 2027-01-27 | RHD4CZ9L06ST1306 |  | -146d |
|  | 9037 | **RHD4-02-002-L06-(ST)-GRP Pipes - 900 mm diameter** |  | 2026-08-31 | 2027-04-17 |  |  |  |
| RHD4CZ9L06ST1105 |  | Excavation works for GRP Pipe Line 900 mm - (RD-L-6)-Z9-L06-ST | 2d | 2026-08-31 A | 2026-09-01 A | RHD4ENSDZ9APPST110, RHD4CZ9L06ST1106, RHD4CZ9L05ST1102 | 100% |  |
| RHD4CZ9L06ST1205 |  | Bedding works for GRP Pipe Line 900 mm - (RD-L-6)-Z9-L06-ST | 2d | 2026-09-15 A | 2026-09-16 A | RHD4CZ9L06ST1105 | 100% |  |
| RHD4CZ9L06ST1305 |  | Installing for GRP Pipe Line 900 mm - (RD-L-6)-Z9-L06-ST | 2d | 2026-09-16 A | 2026-09-17 A | RHD4PRSHLSTAGST1008, RHD4CZ9L06ST1205, RHD4CZ9L06ST1306, RHD4PRSHLDOSST1608, RHD4PRSHLPOST1000, RHD4PRSHLDOSST1008, RHD4PRSHLDOSST1604, RHD4PRSHLDOSST1004 | 100% |  |
| RHD4CZ9L06ST1505 |  | Backfilling and warning tape works for GRP Pipe Line 900 mm - (RD-L-6)-Z9-L06-ST | 2d | 2026-09-17 A | 2026-09-19 A | RHD4CZ9L06ST1405, RHD4CZ9L06ST1506 | 100% |  |
| RHD4CZ9L06ST1405 |  | Primary Test for GRP Pipe Line 900 mm - (RD-L-6)-Z9-L06-ST | 2d | 2027-04-14 | 2027-04-17 | RHD4CZ9L06ST1305 |  | -94.02d |
|  | 9036 | **RHD4-02-002-L06-(ST)-GRP Pipes - 800 mm diameter** |  | 2026-08-29 | 2027-04-17 |  |  |  |
| RHD4CZ9L06ST1104 |  | Excavation works for GRP Pipe Line 800 mm - (RD-L-6)-Z9-L06-ST | 2d | 2026-08-29 A | 2026-08-30 A | RHD4ENSDZ9APPST110, RHD4CZ9L06ST1105 SS | 100% |  |
| RHD4CZ9L06ST1204 |  | Bedding works for GRP Pipe Line 800 mm - (RD-L-6)-Z9-L06-ST | 2d | 2026-08-30 A | 2026-08-31 A | RHD4CZ9L06ST1104 | 100% |  |
| RHD4CZ9L06ST1304 |  | Installing for GRP Pipe Line 800 mm - (RD-L-6)-Z9-L06-ST | 2d | 2026-09-01 A | 2026-09-19 A | RHD4PRSHLSTAGST1008, RHD4CZ9L06ST1204, RHD4PRSHLDOSST1608, RHD4PRSHLPOST1000, RHD4PRSHLDOSST1008, RHD4PRSHLDOSST1604, RHD4PRSHLDOSST1004 | 100% |  |
| RHD4CZ9L06ST1504 |  | Backfilling and warning tape works for GRP Pipe Line 800 mm - (RD-L-6)-Z9-L06-ST | 2d | 2026-09-19 A | 2026-09-20 A | RHD4CZ9L06ST1404 | 100% |  |
| RHD4CZ9L06ST1404 |  | Primary Test for GRP Pipe Line 800 mm - (RD-L-6)-Z9-L06-ST | 2d | 2027-04-14 | 2027-04-17 | RHD4CZ9L06ST1304 |  | -112.02d |
|  | 9035 | **RHD4-02-002-L06-(ST)-GRP Pipes - 700 mm diameter** |  | 2026-08-31 | 2027-04-19 |  |  |  |
| RHD4CZ9L06ST1103 |  | Excavation works for GRP Pipe Line 700 mm - (RD-L-6)-Z9-L06-ST | 2d | 2026-08-31 A | 2026-09-01 A | RHD4ENSDZ9APPST110, RHD4CZ9L06ST1504, RHD4CZ9L06ST1104 | 100% |  |
| RHD4CZ9L06ST1203 |  | Bedding works for GRP Pipe Line 700 mm - (RD-L-6)-Z9-L06-ST | 2d | 2026-09-19 A | 2026-09-20 A | RHD4CZ9L06ST1103 | 100% |  |
| RHD4CZ9L06ST1303 |  | Installing for GRP Pipe Line 700 mm - (RD-L-6)-Z9-L06-ST | 2d | 2026-09-20 A | 2026-09-21 A | RHD4PRSHLSTAGST1008, RHD4CZ9L06ST1203, RHD4CZ9L06ST1304, RHD4PRSHLDOSST1608, RHD4PRSHLPOST1000, RHD4PRSHLDOSST1008, RHD4PRSHLDOSST1604, RHD4PRSHLDOSST1004 | 100% |  |
| RHD4CZ9L06ST1503 |  | Backfilling and warning tape works for GRP Pipe Line 700 mm - (RD-L-6)-Z9-L06-ST | 2d | 2026-09-21 A | 2026-09-22 A | RHD4CZ9L06ST1403, RHD4CZ9L06ST1504 | 100% |  |
| RHD4CZ9L06ST1403 |  | Primary Test for GRP Pipe Line 700 mm - (RD-L-6)-Z9-L06-ST | 2d | 2027-04-17 | 2027-04-19 | RHD4CZ9L06ST1303 |  | -112.02d |
|  | 9032 | **RHD4-02-002-L06-(ST)-GRP Pipes - 400 mm diameter** |  | 2026-08-29 | 2027-04-21 |  |  |  |
| RHD4CZ9L06ST1100 |  | Excavation works for GRP Pipe Line 400 mm - (RD-L-6)-Z9-L06-ST | 2d | 2026-08-29 A | 2026-08-30 A | RHD4ENSDZ9APPST110, RHD4CZ9L06ST1503, RHD4CZ9L06ST1102 | 100% |  |
| RHD4CZ9L06ST1200 |  | Bedding works for GRP Pipe Line 400 mm - (RD-L-6)-Z9-L06-ST | 2d | 2026-09-19 A | 2026-09-20 A | RHD4CZ9L06ST1100 | 100% |  |
| RHD4CZ9L06ST1300 |  | Installing for GRP Pipe Line 400 mm - (RD-L-6)-Z9-L06-ST | 2d | 2026-09-20 A | 2026-09-21 A | RHD4PRSHLSTAGST1008, RHD4CZ9L06ST1200, RHD4CZ9L06ST1303, RHD4PRSHLDOSST1608, RHD4PRSHLPOST1000, RHD4PRSHLDOSST1008, RHD4PRSHLDOSST1604, RHD4PRSHLDOSST1004 | 100% |  |
| RHD4CZ9L06ST1500 |  | Backfilling and warning tape works for GRP Pipe Line 400 mm - (RD-L-6)-Z9-L06-ST | 2d | 2026-09-22 A | 2026-09-24 A | RHD4CZ9L06ST1400, RHD4CZ9L06ST1503 | 100% |  |
| RHD4CZ9L06ST1400 |  | Primary Test for GRP Pipe Line 400 mm - (RD-L-6)-Z9-L06-ST | 2d | 2027-04-19 | 2027-04-21 | RHD4CZ9L06ST1300 |  | -112.02d |
|  | 9046 | **RHD4-02-002-L06-(ST)-UPVC Pipes - 300 mm diameter** |  | 2026-09-19 | 2027-05-05 |  |  |  |
| RHD4CZ9L06ST2100 |  | Excavation works for UPVC Pipe Line 300 mm - (RD-L-6)-Z9-L06-ST | 2d | 2026-09-19 A | 2027-04-25 | RHD4ENSDZ9APPST110, RHD4CZ9L06ST1500, RHD4CZ9L06ST1100 | 89% | -112.02d |
| RHD4CZ9L06ST2200 |  | Bedding works for UPVC Pipe Line 300 mm - (RD-L-6)-Z9-L06-ST | 2d | 2026-09-21 A | 2027-04-27 | RHD4CZ9L06ST2100 | 92% | -112.02d |
| RHD4CZ9L06ST2300 |  | Installing for UPVC Pipe Line 300 mm - (RD-L-6)-Z9-L06-ST | 2d | 2026-09-22 A | 2027-04-29 | RHD4PRSHLDOSST1108, RHD4PRSHLSTAGST1108, RHD4CZ9L06ST2200 | 93% | -112.02d |
| RHD4CZ9L06ST2500 |  | Backfilling and warning tape works for UPVC Pipe Line 300 mm - (RD-L-6)-Z9-L06-ST | 3d | 2026-09-23 A | 2027-05-05 | RHD4CZ9L06ST2400, RHD4CZ9L06ST6100 | 92% | -112.02d |

| ID | WBS | Task | Duration | Start | Finish | Predecessors | Complete | Total float |
| --- | --- | --- | --- | --- | --- | --- | --- | --- |
| RHD4CZ9L06ST2400 |  | Primary Test for UPVC Pipe Line 300 mm - (RD-L-6)-Z9-L06-ST | 2d | 2027-04-29 | 2027-05-02 | RHD4CZ9L06ST2300 |  | -112.02d |
|  | 9054 | **RHD4-02-002-L06-(ST)-Concrete Encasement** |  | 2027-04-27 | 2027-04-29 |  |  |  |
| RHD4CZ9L06ST6100 |  | Pipe Encasement for Storm Pipelines - (RD-L-6)-Z9-L06-ST | 2d | 2027-04-27 | 2027-04-29 | RHD4CZ9L06ST2300 SS, RHD4CZ9L06ST2300 FF, RHD4CZ9L06ST2200 |  | -110.02d |
|  | 9055 | **RHD4-02-002-Z9-L06-Catch Basin - ST** |  | 2026-09-19 | 2027-05-19 |  |  |  |
|  | 9056 | **RHD4-02-002-L06-(ST)-Single Catch Basin Works** |  | 2026-09-19 | 2027-05-19 |  |  |  |
| RHD4CZ9L06ST7100 |  | Excavation works for Single Catch Basin - (RD-L-6)-Z9-L06-ST | 3d | 2026-09-19 A | 2027-04-29 | RHD4ENSDZ9APPST110, RHD4CZ9L06ST3300, RHD4CZ9L06ST3301 | 54% | -86.02d |
| RHD4CZ9L06ST7200 |  | PC Blinding, Installation and Pipe connection for Single Catch Basin - (RD-L-6)-Z9-L06-ST | 3d | 2026-09-20 A | 2027-05-02 | RHD4CZ9L06ST7100 | 54% | -86.02d |
| RHD4CZ9L06ST7300 |  | Rings & C.Slab & Final Backfill for Single Catch Basin - (RD-L-6)-Z9-L06-ST | 3d | 2026-09-22 A | 2027-05-05 | RHD4PRSHLDOSST1308, RHD4PRSHLSTAGST1308, RHD4CZ9L06ST7200 | 54% | -86.02d |
| RHD4CZ9L06ST7400 |  | Steel Cover for Single Catch Basin - (RD-L-6)-Z9-L06-ST | 3d | 2027-05-05 | 2027-05-09 | RHD4PRSHLDOSST1708, RHD4CZ9L06ST7300 |  | -86.02d |
| RHD4CZ9L06ST7500 |  | Finishing and Insulation works for Single Catch Basin - (RD-L-6)-Z9-L06-ST | 5d | 2027-05-09 | 2027-05-19 | RHD4CZ9L06ST7400 |  | -86.02d |
|  | 9080 | **RHD4-02-002-Z9-L06-Sewage Network - SW** |  | 2026-09-15 | 2027-05-27 |  |  |  |
|  | 9090 | **RHD4-02-002-L06-(SW)-MH Works - 1200 mm diameter** |  | 2026-09-20 | 2027-05-27 |  |  |  |
| RHD4CZ9L06SW3100 |  | Excavation and PC Blinding works for MH 1200 mm - (RD-L-6)-Z9-L06-SW | 3d | 2026-09-20 A | 2026-10-20 A | RHD4ENSDZ9APPSW120, RHD4CZ9L06SW2100 | 100% |  |
| RHD4CZ9L06SW3200 |  | Installation of Base for MH 1200 mm - (RD-L-6)-Z9-L06-SW | 6d | 2026-10-21 A | 2026-10-27 A | RHD4CZ9L06SW3100 | 100% |  |
| RHD4CZ9L06SW3300 |  | MH Ring and C.Slab works and Backfilling works for MH 1200 mm - (RD-L-6)-Z9-L06-SW | 6d | 2027-05-05 | 2027-05-12 | RHD4PRSHLDOSSW1308, RHD4PRSHLSTAGSW1308, RHD4CZ9L06SW3200 |  | -86.02d |
| RHD4CZ9L06SW3400 |  | Steel Cover for MH 1200 mm - (RD-L-6)-Z9-L06-SW | 3d | 2027-05-12 | 2027-05-20 | RHD4PRSHLDOSSW1408, RHD4PRSHLSTAGSW1408, RHD4CZ9L06SW3300 |  | -86.02d |
| RHD4CZ9L06SW3500 |  | Finishing, Benching, Testing works for MH 1200 mm - (RD-L-6)-Z9-L06-SW | 6d | 2027-05-20 | 2027-05-27 | RHD4CZ9L06SW3400 |  | -86.02d |
|  | 957 | **RHD4-02-002-L06-(SW)-MH Works - 1200 mm diameter with Back drop** |  | 2026-09-20 | 2027-05-19 |  |  |  |
| RHD4CZ9L06SW3101 |  | Excavation and PC Blinding works for MH 1200 mm - (RD-L-6)-Z9-L06-SW | 2d | 2026-09-20 A | 2026-10-20 A | RHD4CZ9L06SW3100 SS | 100% |  |
| RHD4CZ9L06SW3201 |  | Installation of Base for MH 1200 mm - (RD-L-6)-Z9-L06-SW | 3d | 2026-10-21 A | 2026-10-24 A | RHD4CZ9L06SW3101 | 100% |  |
| RHD4CZ9L06SW3301 |  | MH Ring and C.Slab works and Backfilling works for MH 1200 mm - (RD-L-6)-Z9-L06-SW | 3d | 2027-05-05 | 2027-05-09 | RHD4CZ9L06SW3201 |  | -88.02d |
| RHD4CZ9L06SW3401 |  | Steel Cover for MH 1200 mm - (RD-L-6)-Z9-L06-SW | 2d | 2027-05-09 | 2027-05-11 | RHD4CZ9L06SW3301 |  | -88.02d |
| RHD4CZ9L06SW3501 |  | Finishing, Benching, Testing works for MH 1200 mm - (RD-L-6)-Z9-L06-SW | 3d | 2027-05-11 | 2027-05-19 | RHD4CZ9L06SW3401 |  | -88.02d |
|  | 9086 | **RHD4-02-002-L06-(SW)-UPVC Pipes - 200 mm diameter** |  | 2026-09-15 | 2027-05-09 |  |  |  |
| RHD4CZ9L06SW2100 |  | Excavation works for UPVC Pipe Line 200 mm - (RD-L-6)-Z9-L06-SW | 3d | 2026-09-15 A | 2026-09-22 A | RHD4ENSDZ9APPSW120, RHD4CZ9L06ST2500 | 100% |  |
| RHD4CZ9L06SW2200 |  | Bedding works for UPVC Pipe Line 200 mm - (RD-L-6)-Z9-L06-SW | 3d | 2026-09-23 A | 2026-09-24 A | RHD4CZ9L06SW2100 | 100% |  |
| RHD4CZ9L06SW2300 |  | Installing for UPVC Pipe Line 200 mm - (RD-L-6)-Z9-L06-SW | 4d | 2026-10-27 A | 2026-10-31 A | RHD4PRSHLDOSSW1008, RHD4PRSHLSTAGSW1008, RHD4CZ9L06SW2200 | 100% |  |
| RHD4CZ9L06SW2500 |  | Backfilling and warning tape works for UPVC Pipe Line 200 mm - (RD-L-6)-Z9-L06-SW | 3d | 2026-10-31 A | 2026-11-01 A | RHD4CZ9L06SW2400 | 100% |  |
| RHD4CZ9L06SW2400 |  | Primary Test for UPVC Pipe Line 200 mm - (RD-L-6)-Z9-L06-SW | 3d | 2027-05-05 | 2027-05-09 | RHD4CZ9L06SW2300 |  | -105.02d |
|  | 9089 | **RHD4-02-002-L06-(SW)-Concrete Encasement** |  |  |  |  |  |  |
|  | 9117 | **RHD4-02-002-Z9-L06-Potable Network - PT** |  | 2027-05-09 | 2027-06-09 |  |  |  |
|  | 9118 | **RHD4-02-002-L06-(PT)-HDPE Pipes - 110 mm diameter** |  | 2027-05-11 | 2027-05-30 |  |  |  |
| RHD4CZ9L06PT1100 |  | Excavation works for HDPE Pipline 110 mm - (RD-L-6)-Z9-L06-PT | 2d | 2027-05-11 | 2027-05-13 | RHD4ENSDZ9APPPT130, RHD4ENMSPT2000, RHD4CZ9L06PT1101 |  | -103.02d |
| RHD4CZ9L06PT1200 |  | Bedding works for HDPE Pipline 110 mm - (RD-L-6)-Z9-L06-PT | 2d | 2027-05-13 | 2027-05-20 | RHD4CZ9L06PT1100, RHD4CZ9L06PT1201 |  | -103.02d |
| RHD4CZ9L06PT1300 |  | Installing for HDPE Pipline 110 mm - (RD-L-6)-Z9-L06-PT | 2d | 2027-05-22 | 2027-05-24 | RHD4PRSHLDOSPT1000, RHD4PRSHLSTAGPT1000, RHD4CZ9L06PT1200, RHD4CZ9L06PT1301 |  | -104.02d |
| RHD4CZ9L06PT1400 |  | Primary Test for HDPE Pipline 110 mm - (RD-L-6)-Z9-L06-PT | 2d | 2027-05-24 | 2027-05-26 | RHD4CZ9L06PT1300, RHD4CZ9L06PT1401 |  | -104.02d |
| RHD4CZ9L06PT1500 |  | Backfilling and warning tape works for HDPE Pipline 110 mm - (RD-L-6)-Z9-L06-PT | 2d | 2027-05-27 | 2027-05-30 | RHD4CZ9L06PT1400, RHD4CZ9L06PT1501 |  | -105.02d |
|  | 9119 | **RHD4-02-002-L06-(PT)-HDPE Pipes - 160 mm diameter** |  | 2027-05-09 | 2027-05-27 |  |  |  |
| RHD4CZ9L06PT1101 |  | Excavation works for HDPE Pipline 160 mm - (RD-L-6)-Z9-L06-PT | 2d | 2027-05-09 | 2027-05-11 | RHD4ENSDZ9APPPT130, RHD4ENMSPT2000, RHD4CZ9L06SW2500 |  | -105.02d |
| RHD4CZ9L06PT1201 |  | Bedding works for HDPE Pipline 160 mm - (RD-L-6)-Z9-L06-PT | 2d | 2027-05-11 | 2027-05-13 | RHD4CZ9L06PT1101 |  | -105.02d |
| RHD4CZ9L06PT1301 |  | Installing for HDPE Pipline 160 mm - (RD-L-6)-Z9-L06-PT | 3d | 2027-05-13 | 2027-05-22 | RHD4PRSHLDOSPT1000, RHD4PRSHLSTAGPT1000, RHD4CZ9L06PT1201 |  | -105.02d |
| RHD4CZ9L06PT1401 |  | Primary Test for HDPE Pipline 160 mm - (RD-L-6)-Z9-L06-PT | 2d | 2027-05-22 | 2027-05-24 | RHD4CZ9L06PT1301 |  | -105.02d |
| RHD4CZ9L06PT1501 |  | Backfilling and warning tape works for HDPE Pipline 160 mm - (RD-L-6)-Z9-L06-PT | 3d | 2027-05-24 | 2027-05-27 | RHD4CZ9L06PT1401 |  | -105.02d |
|  | 9123 | **RHD4-02-002-L06-(PT)-Gate Valves (Direct Buried)** |  | 2027-05-22 | 2027-05-30 |  |  |  |
| RHD4CZ9L06PT3100 |  | Installation for Direct Buried Gate Valves - (RD-L-6)-Z9-L06-PT | 2d | 2027-05-22 | 2027-05-24 | RHD4PRSHLDOSPT1200, RHD4PRSHLSTAGPT1200, RHD4CZ9L06PT1301 FF, RHD4CZ9L06PT1300 FF, RHD4CZ9L06PT1301 SS, RHD4CZ9L06PT1300 SS |  | -102.02d |
| RHD4CZ9L06PT3200 |  | Stem and Service box for Direct Buried Gate Valves - (RD-L-6)-Z9-L06-PT | 2d | 2027-05-27 | 2027-05-30 | RHD4PRSHLDOSPT1300, RHD4PRSHLSTAGPT1300, RHD4CZ9L06PT3100, RHD4CZ9L06PT1501 |  | -105.02d |
|  | 9128 | **RHD4-02-002-L06-(PT)-Air Valve Chambers** |  | 2027-05-22 | 2027-05-31 |  |  |  |
| RHD4CZ9L06PT2102 |  | Excavation and Bedding for Air Valve Chambers for Potable Water Network - (RD-L-6)-Z9-L06-PT | 2d | 2027-05-22 | 2027-05-24 | RHD4ENSDZ9APPPT130, RHD4CZ9L06PT1301 |  | -102.02d |
| RHD4CZ9L06PT2202 |  | PC works for Air Valve Chambers for Potable Water Network - (RD-L-6)-Z9-L06-PT | 2d | 2027-05-24 | 2027-05-26 | RHD4CZ9L06PT2102 |  | -102.02d |
| RHD4CZ9L06PT2302 |  | Installation for Air Valve Chambers for Potable Water Network - (RD-L-6)-Z9-L06-PT | 2d | 2027-05-26 | 2027-05-29 | RHD4PRSHLDOSPT1100, RHD4PRSHLDOSPT1400, RHD4PRSHLSTAGPT1100, RHD4PRSHLSTAGPT1400, RHD4CZ9L06PT2202 |  | -102.02d |
| RHD4CZ9L06PT2402 |  | Backfilling works for Air Valve Chambers for Potable Water Network - (RD-L-6)-Z9-L06-PT | 2d | 2027-05-29 | 2027-05-31 | RHD4CZ9L06PT2302 |  | -102.02d |
|  | 9129 | **RHD4-02-002-L06-(PT)-Air Valves** |  | 2027-05-11 | 2027-05-20 |  |  |  |
| RHD4CZ9L06PT3103 |  | Installation for Air Valves for Potable Water Network - (RD-L-6)-Z9-L06-PT | 2d | 2027-05-11 | 2027-05-13 | RHD4PRSHLDOSPT1200, RHD4PRSHLSTAGPT1200, RHD4CZ9L06PT1101 |  | -93.02d |
| RHD4CZ9L06PT3203 |  | Stem and Service box for Air Valves for Potable Water Network - (RD-L-6)-Z9-L06-PT | 2d | 2027-05-13 | 2027-05-20 | RHD4PRSHLDOSPT1300, RHD4PRSHLSTAGPT1300, RHD4CZ9L06PT3103 |  | -93.02d |
|  | 9130 | **RHD4-02-002-L06-(PT)-Fire Hydrant** |  | 2027-05-27 | 2027-06-09 |  |  |  |
| RHD4CZ9L06PT4100 |  | Excavation and Bedding and Pipe Installation for Fire Hydrant - (RD-L-6)-Z9-L06-PT | 3d | 2027-05-27 | 2027-05-31 | RHD4ENSDZ9APPPT130, RHD4CZ9L06PT1501 |  | -86.02d |
| RHD4CZ9L06PT4200 |  | Valve Installation for Fire Hydrant - (RD-L-6)-Z9-L06-PT | 2d | 2027-05-31 | 2027-06-02 | RHD4CZ9L06PT4100 |  | -86.02d |
| RHD4CZ9L06PT4300 |  | Stem for Fire Hydrant - (RD-L-6)-Z9-L06-PT | 2d | 2027-06-02 | 2027-06-05 | RHD4CZ9L06PT4200 |  | -86.02d |
| RHD4CZ9L06PT4400 |  | Fire Installation for Fire Hydrant - (RD-L-6)-Z9-L06-PT | 2d | 2027-06-05 | 2027-06-07 | RHD4PRSHLDOSPT1500, RHD4PRSHLSTAGPT1500, RHD4CZ9L06PT4300 |  | -86.02d |
| RHD4CZ9L06PT4500 |  | Protection Barriers for Fire Hydrant - (RD-L-6)-Z9-L06-PT | 2d | 2027-06-07 | 2027-06-09 | RHD4CZ9L06PT4400 |  | -86.02d |
|  | 9132 | **RHD4-02-002-Z9-L06-Irrigation Network - IRR** |  | 2027-05-31 | 2027-06-16 |  |  |  |
|  | 9133 | **RHD4-02-002-L06-(IRR)-HDPE Pipes - 160 mm diameter** |  | 2027-05-31 | 2027-06-16 |  |  |  |
| RHD4CZ9L06IRR1100 |  | Excavation works for HDPE Pipline 160 mm - (RD-L-6)-Z9-L06-IRR | 3d | 2027-05-31 | 2027-06-03 | RHD4ENSDZ9APPIRR140, RHD4ENMSRR2000, RHD4CZ9L06PT2402, RHD4CZ9L06PT3203 |  | -102.02d |
| RHD4CZ9L06IRR1200 |  | Bedding works for HDPE Pipline 160 mm - (RD-L-6)-Z9-L06-IRR | 3d | 2027-06-03 | 2027-06-07 | RHD4CZ9L06IRR1100 |  | -102.02d |
| RHD4CZ9L06IRR1300 |  | Installing for HDPE Pipline 160 mm - (RD-L-6)-Z9-L06-IRR | 3d | 2027-06-07 | 2027-06-10 | RHD4PRSHLDOSIRR1000, RHD4PRSHLSTAGIRR1000, RHD4CZ9L06IRR1200 |  | -102.02d |
| RHD4CZ9L06IRR1400 |  | Primary Test for HDPE Pipline 160 mm - (RD-L-6)-Z9-L06-IRR | 2d | 2027-06-10 | 2027-06-13 | RHD4CZ9L06IRR1300 |  | -100.02d |
| RHD4CZ9L06IRR1500 |  | Backfilling and warning tape works for HDPE Pipline 160 mm - (RD-L-6)-Z9-L06-IRR | 3d | 2027-06-13 | 2027-06-16 | RHD4CZ9L06IRR1400 |  | -100.02d |
|  | 9141 | **RHD4-02-002-L06-(IRR)-Gate Valves (Direct Buried)** |  | 2027-06-08 | 2027-06-13 |  |  |  |
| RHD4CZ9L06IRR3100 |  | Installation for Direct Buried Gate Valves - (RD-L-6)-Z9-L06-IRR | 2d | 2027-06-08 | 2027-06-10 | RHD4PRSHLDOSIRR1100, RHD4PRSHLSTAGIRR1100, RHD4CZ9L06IRR1300 SS, RHD4CZ9L06IRR1300 FF |  | -102.02d |
| RHD4CZ9L06IRR3200 |  | Stem and Service box for Direct Buried Gate Valves - (RD-L-6)-Z9-L06-IRR | 2d | 2027-06-10 | 2027-06-13 | RHD4PRSHLDOSIRR1300, RHD4PRSHLSTAGIRR1300, RHD4CZ9L06IRR3100 |  | -102.02d |

| ID | WBS | Task | Duration | Start | Finish | Predecessors | Total float |
| --- | --- | --- | --- | --- | --- | --- | --- |
|  | 9144 | **RHD4-02-002-L06-(IRR)-Wash out Chamber** |  |  |  |  |  |
|  | 9145 | **RHD4-02-002-L06-(IRR)-Wash out Valves** |  |  |  |  |  |
|  | 9146 | **RHD4-02-002-L06-(IRR)-Air Valve Chamber** |  |  |  |  |  |
|  | 9147 | **RHD4-02-002-L06-(IRR)-Air Valves** |  |  |  |  |  |
|  | 9166 | **RHD4-02-002-Z9-L06-Medium Voltage Network - MV** |  | 2027-03-01 | 2027-04-01 |  |  |
|  | 9167 | **RHD4-02-002-L06-(MV)-Medium Voltage cable trench** |  | 2027-03-01 | 2027-04-01 |  |  |
| RHD4CZ9L06MV1100 |  | Excavation for Medium Voltage Trench - (RD-L-6)-Z9-L06-MV | 5d | 2027-03-01 | 2027-03-06 | RHD4ENSDZ9APPMV150, RHD4CZ9L06RD3100 | -150d |
| RHD4CZ9L06MV1200 |  | Trench Backfilling for Medium Voltage Network - (RD-L-6)-Z9-L06-MV | 5d | 2027-03-28 | 2027-04-01 | RHD4CZ9L06MV4200 | -150d |
|  | 9168 | **RHD4-02-002-L06-(MV)-Medium Voltage duct banks** |  | 2027-03-01 | 2027-03-13 |  |  |
| RHD4CZ9L06MV2100 |  | Excavation of Duct Banks for Medium Voltage Network - (RD-L-6)-Z9-L06-MV | 2d | 2027-03-01 | 2027-03-02 | RHD4ENSDZ9APPMV150, RHD4CZ9L06RD3100 | -154d |
| RHD4CZ9L06MV2200 |  | Installation of Duct Banks for Medium Voltage Network - (RD-L-6)-Z9-L06-MV | 2d | 2027-03-03 | 2027-03-04 | RHD4PRSHLDOSMV1000, RHD4PRSHLSTAGMV1000, RHD4CZ9L06MV2100 | -154d |
| RHD4CZ9L06MV2300 |  | Pouring of Duct Banks for Medium Voltage Network - (RD-L-6)-Z9-L06-MV | 2d | 2027-03-06 | 2027-03-07 | RHD4CZ9L06MV2200 | -154d |
| RHD4CZ9L06MV2400 |  | Backfilling of Duct Banks for Medium Voltage Network - (RD-L-6)-Z9-L06-MV | 2d | 2027-03-08 | 2027-03-13 | RHD4CZ9L06MV2300 | -154d |
|  | 9169 | **RHD4-02-002-L06-(MV)-Medium Voltage cables 3Cx 500 mm²** |  | 2027-03-07 | 2027-03-22 |  |  |
| RHD4CZ9L06MV3100 |  | Installation of Medium Voltage Cables 3Cx 500 mm² - (RD-L-6)-Z9-L06-MV | 5d | 2027-03-07 | 2027-03-15 | RHD4PRSHLDOSMV1100, RHD4ENMSMV2000, RHD4ENMSMV2010, RHD4PRSHLSTAGMV1100, RHD4CZ9L06MV1100 | -150d |
| RHD4CZ9L06MV3200 |  | Joints Installation of Medium Voltage Cables 3Cx 500 mm² - (RD-L-6)-Z9-L06-MV | 2d | 2027-03-16 | 2027-03-17 | RHD4PRSHLDOSMV1300, RHD4PRSHLSTAGMV1300, RHD4CZ9L06MV3100 | -150d |
| RHD4CZ9L06MV3300 |  | Testing of Medium Voltage Cables 3Cx 500 mm² - (RD-L-6)-Z9-L06-MV | 2d | 2027-03-18 | 2027-03-20 | RHD4CZ9L06MV3200 | -150d |
| RHD4CZ9L06MV3400 |  | Termination of Medium Voltage Cables 3Cx 500 mm² - (RD-L-6)-Z9-L06-MV | 2d | 2027-03-21 | 2027-03-22 | RHD4CZ9L06MV3300 | -150d |
|  | 9170 | **RHD4-02-002-L06-(MV)-Medium Voltage cables 3Cx 50 mm²** |  | 2027-03-21 | 2027-03-22 |  |  |
| RHD4CZ9L06MV3401 |  | Termination of Medium Voltage Cables 3Cx 50 mm² - (RD-L-6)-Z9-L06-MV | 2d | 2027-03-21 | 2027-03-22 | RHD4CZ9L06MV3400 SS | -150d |
|  | 9171 | **RHD4-02-002-L06-(MV)-Normally open Point (Outdoor Type)** |  | 2027-03-23 | 2027-03-27 |  |  |
| RHD4CZ9L06MV4100 |  | Installation for Normally open Point - (RD-L-6)-Z9-L06-MV | 2d | 2027-03-23 | 2027-03-24 | RHD4PRSHLDOSMV1400, RHD4PRSHLSTAGMV1400, RHD4CZ9L06MV3401 | -150d |
| RHD4CZ9L06MV4200 |  | Termination for Normally open Point - (RD-L-6)-Z9-L06-MV | 2d | 2027-03-25 | 2027-03-27 | RHD4CZ9L06MV4100 | -150d |
|  | 9173 | **RHD4-02-002-Z9-L06-Low Voltage Network - LV** |  | 2027-06-13 | 2027-06-23 |  |  |
|  | 9174 | **RHD4-02-002-L06-(LV)-Low Voltage duct banks** |  |  |  |  |  |
|  | 9176 | **RHD4-02-002-L06-(LV)-Low Voltage cables** |  | 2027-06-13 | 2027-06-23 |  |  |
| RHD4CZ9L06LV3100 |  | Excavation for Low Voltage Cables for Low Voltage Network - (RD-L-6)-Z9-L06-LV | 3d | 2027-06-13 | 2027-06-16 | RHD4ENSDZ9APPLV160, RHD4CZ9L06MV1200, RHD4CZ9L06IRR3200 | -102.02d |
| RHD4CZ9L06LV3200 |  | Cable Laying of Low Voltage Cables for Low Voltage Network - (RD-L-6)-Z9-L06-LV | 2d | 2027-06-16 | 2027-06-19 | RHD4PRSHLDOSLV1100, RHD4ENMSLV2000, RHD4ENMSLV2010, RHD4PRSHLSTAGLV1100, RHD4CZ9L06LV3100 | -102.02d |
| RHD4CZ9L06LV3300 |  | Warning tape and Backfill for Low Voltage Cables for Low Voltage Network - (RD-L-6)-Z9-L06-LV | 2d | 2027-06-19 | 2027-06-21 | RHD4CZ9L06LV3200 | -102.02d |
| RHD4CZ9L06LV3400 |  | Testing of Low Voltage Cables for Low Voltage Network - (RD-L-6)-Z9-L06-LV | 2d | 2027-06-21 | 2027-06-23 | RHD4CZ9L06LV3300 | -102.02d |
|  | 9179 | **RHD4-02-002-Z9-L06-Street Lighting Network - SL** |  | 2027-03-14 | 2027-07-27 |  |  |
|  | 9180 | **RHD4-02-002-L06-(SL)-Street Lighting duct banks** |  | 2027-03-14 | 2027-03-22 |  |  |
| RHD4CZ9L06SL2100 |  | Excavation of Duct Banks for Street Lighting Network - (RD-L-6)-Z9-L06-SL | 2d | 2027-03-14 | 2027-03-15 | RHD4ENSDZ9APPSL170, RHD4ENSDZ9APPLV160, RHD4CZ9L06MV2400 | -154d |
| RHD4CZ9L06SL2200 |  | Installation of Duct Banks for Street Lighting Network - (RD-L-6)-Z9-L06-SL | 2d | 2027-03-16 | 2027-03-17 | RHD4PRSHLDOSSL1000, RHD4PRSHLSTAGSL1000, RHD4CZ9L06SL2100 | -154d |
| RHD4CZ9L06SL2300 |  | Pouring of Duct Banks for Street Lighting Network - (RD-L-6)-Z9-L06-SL | 2d | 2027-03-18 | 2027-03-20 | RHD4CZ9L06SL2200 | -154d |
| RHD4CZ9L06SL2400 |  | Backfilling of Duct Banks for Street Lighting Network - (RD-L-6)-Z9-L06-SL | 2d | 2027-03-21 | 2027-03-22 | RHD4CZ9L06SL2300 | -154d |
|  | 9181 | **RHD4-02-002-L06-(SL)-Street Lighting Drawpit** |  | 2027-06-23 | 2027-06-28 |  |  |
| RHD4CZ9L06SL5100 |  | Excavation of Drawpit size 600x600x900mm for Street Lighting Network - (RD-L-6)-Z9-L06-SL | 2d | 2027-06-23 | 2027-06-26 | RHD4ENSDZ9APPSL170, RHD4CZ9L06SL2300, RHD4CZ9L06LV3400 | -102.02d |
| RHD4CZ9L06SL5200 |  | Installation of Drawpit size 600x600x900mm for Street Lighting Network - (RD-L-6)-Z9-L06-SL | 2d | 2027-06-26 | 2027-06-28 | RHD4PRSHLDOSSL1400, RHD4PRSHLSTAGSL1400, RHD4CZ9L06SL5100 | -102.02d |
|  | 9182 | **RHD4-02-002-L06-(SL)-Street Lighting cables** |  | 2027-06-28 | 2027-07-12 |  |  |
| RHD4CZ9L06SL3100 |  | Excavation for Street Lighting Cables for Street Lighting Network - (RD-L-6)-Z9-L06-SL | 4d | 2027-06-28 | 2027-07-03 | RHD4ENSDZ9APPSL170, RHD4CZ9L06SL5200 | -102.02d |
| RHD4CZ9L06SL3200 |  | Cable Laying of Street Lighting Cables for Street Lighting Network - (RD-L-6)-Z9-L06-SL | 3d | 2027-07-03 | 2027-07-06 | RHD4PRSHLDOSSL1100, RHD4ENMSSL2000, RHD4ENMSSL2010, RHD4PRSHLSTAGSL1100, RHD4CZ9L06SL3100 | -102.02d |
| RHD4CZ9L06SL3300 |  | Warning tape and Backfill for Street Lighting Cables for Street Lighting Network - (RD-L-6)-Z9-L06-SL | 3d | 2027-07-06 | 2027-07-10 | RHD4CZ9L06SL3200 | -102.02d |
| RHD4CZ9L06SL3400 |  | Testing of Street Lighting Cables for Street Lighting Network - (RD-L-6)-Z9-L06-SL | 2d | 2027-07-10 | 2027-07-12 | RHD4CZ9L06SL3300 | -102.02d |
|  | 9183 | **RHD4-02-002-L06-(SL)-Street Lighting Poles** |  | 2027-07-12 | 2027-07-25 |  |  |
| RHD4CZ9L06SL1100 |  | Excavation for RC Base for Lighting Poles for Street Lighting Network - (RD-L-6)-Z9-L06-SL | 2d | 2027-07-12 | 2027-07-14 | RHD4ENSDZ9APPSL170, RHD4CZ9L06SL3400 | -102.02d |
| RHD4CZ9L06SL1200 |  | Installation for RC Base for Lighting Poles for Street Lighting Network - (RD-L-6)-Z9-L06-SL | 2d | 2027-07-14 | 2027-07-17 | RHD4CZ9L06SL1100 | -102.02d |
| RHD4CZ9L06SL1300 |  | Backfill for RC Base for Lighting Poles for Street Lighting Network - (RD-L-6)-Z9-L06-SL | 2d | 2027-07-17 | 2027-07-19 | RHD4CZ9L06SL1200 | -102.02d |
| RHD4CZ9L06SL1400 |  | Installation for Lighting Poles for Street Lighting Network - (RD-L-6)-Z9-L06-SL | 3d | 2027-07-19 | 2027-07-22 | RHD4PRSHLDOSSL1200, RHD4ENMSSL2000, RHD4ENMSSL2010, RHD4PRSHLSTAGSL1200, RHD4CZ9L06SL1300 | -102.02d |
| RHD4CZ9L06SL1500 |  | Luminaire Installation for Lighting Poles for Street Lighting Network - (RD-L-6)-Z9-L06-SL | 2d | 2027-07-22 | 2027-07-25 | RHD4PRSHLDOSSL1300, RHD4PRSHLSTAGSL1300, RHD4CZ9L06SL1400 | -102.02d |
|  | 9185 | **RHD4-02-002-L06-(SL)-Street Lighting Earthing System** |  | 2027-07-25 | 2027-07-27 |  |  |
| RHD4CZ9L06SL6100 |  | Installation of Earthing for Lighting Poles and Fedder Pillers for Street Lighting Network - (RD-L-6)-Z9-L06-SL | 2d | 2027-07-25 | 2027-07-27 | RHD4ENMSER2000, RHD4ENMSER2010, RHD4CZ9L06SL1500 | -102.02d |
|  | 9191 | **RHD4-02-002-Z9-L06-Telecommunications Network - TC** |  | 2027-07-27 | 2027-08-26 |  |  |
|  | 9192 | **RHD4-02-002-L06-(TC)-Telecommunications Ducts** |  | 2027-07-27 | 2027-08-19 |  |  |
| RHD4CZ9L06TC2100 |  | Excavation of HDPE Ducts for Telecom Network - (RD-L-6)-Z9-L06-TC | 6d | 2027-07-27 | 2027-08-03 | RHD4ENSDZ9APPTC190, RHD4CZ9L06SL6100 | -102.02d |
| RHD4CZ9L06TC2200 |  | Installation of HDPE Ducts for Telecom Network - (RD-L-6)-Z9-L06-TC | 8d | 2027-08-03 | 2027-08-12 | RHD4PRSHLDOSTC1000, RHD4PRSHLSTAGTC1000, RHD4CZ9L06TC2100 | -102.02d |
| RHD4CZ9L06TC2400 |  | Backfilling of HDPE Ducts for Telecom Network - (RD-L-6)-Z9-L06-TC | 6d | 2027-08-12 | 2027-08-19 | RHD4CZ9L06TC2200 | -102.02d |
|  | 9193 | **RHD4-02-002-L06-(TC)-Telecommunications Manholes** |  | 2027-08-19 | 2027-08-26 |  |  |
| RHD4CZ9L06TC5100 |  | Excavation for Manholes for Telecom Network - (RD-L-6)-Z9-L06-TC | 3d | 2027-08-19 | 2027-08-23 | RHD4ENSDZ9APPTC190, RHD4CZ9L06TC2400 | -102.02d |
| RHD4CZ9L06TC5200 |  | Installation of Manholes for Telecom Network - (RD-L-6)-Z9-L06-TC | 3d | 2027-08-23 | 2027-08-26 | RHD4PRSHLDOSTC1200, RHD4PRSHLSTAGTC1200, RHD4CZ9L06TC5100 | -102.02d |
|  | 9195 | **RHD4-02-002-Z9-L06-Information and Communication Technologies - ICT** |  | 2027-08-26 | 2027-09-22 |  |  |
|  | 9196 | **RHD4-02-002-L06-(ICT)-Information and Communication Technologies Ducts** |  | 2027-08-26 | 2027-09-15 |  |  |
| RHD4CZ9L06ICT2100 |  | Excavation of HDPE Ducts for ICT Network - (RD-L-6)-Z9-L06-ICT | 5d | 2027-08-26 | 2027-09-01 | RHD4ENSDZ9APPICT200, RHD4CZ9L06TC5200 | -102.02d |
| RHD4CZ9L06ICT2200 |  | Installation of HDPE Ducts for ICT Network - (RD-L-6)-Z9-L06-ICT | 7d | 2027-09-01 | 2027-09-09 | RHD4PRSHLDOSICT1000, RHD4PRSHLSTAGICT1000, RHD4CZ9L06ICT2100 | -102.02d |
| RHD4CZ9L06ICT2400 |  | Backfilling of HDPE Ducts for ICT Network - (RD-L-6)-Z9-L06-ICT | 5d | 2027-09-09 | 2027-09-15 | RHD4CZ9L06ICT2200 | -102.02d |
|  | 9197 | **RHD4-02-002-L06-(ICT)-Information and Communication Technologies Manholes** |  | 2027-09-15 | 2027-09-22 |  |  |
| RHD4CZ9L06ICT5100 |  | Excavation for Manholes for ICT Network - (RD-L-6)-Z9-L06-ICT | 3d | 2027-09-15 | 2027-09-19 | RHD4ENSDZ9APPICT200, RHD4CZ9L06ICT2400, RHD4CZ9B36EX1000 | -102.02d |
| RHD4CZ9L06ICT5200 |  | Installation of Manholes for ICT Network - (RD-L-6)-Z9-L06-ICT | 3d | 2027-09-19 | 2027-09-22 | RHD4PRSHLDOSICT1200, RHD4PRSHLSTAGICT1200, RHD4CZ9L06ICT5100 | -102.02d |
|  | 9186 | **RHD4-02-002-Z9-L06-Landscape Network - LS** |  |  |  |  |  |
|  | 9187 | **RHD4-02-002-L06-(LS)-Landscape Lighting cables** |  |  |  |  |  |

| ID | WBS | Task | Duration | Start | Finish | Predecessors | Complete | Total float |
| --- | --- | --- | --- | --- | --- | --- | --- | --- |
|  | 9188 | **RHD4-02-002-L06-(LS)-Landscape Feeder Pillars** |  |  |  |  |  |  |
|  | 9189 | **RHD4-02-002-L06-(LS)-Landscape Bollard Poles** |  |  |  |  |  |  |
|  | 9190 | **RHD4-02-002-L06-(LS)-Landscape Feeder Pillars Earthing** |  |  |  |  |  |  |
|  | 9199 | **RHD4-02-002-Z9-L06-Security Network - CCTV** |  |  |  |  |  |  |
|  | 9200 | **RHD4-02-002-L06-(CCTV)-Civil Works** |  |  |  |  |  |  |
|  | 8460 | **RHD4-02-002-Z9-L02** |  | 2026-08-15 | 2028-03-23 |  |  |  |
|  | 8491 | **RHD4-02-002-Z9-L02-Crossings Sewage Network - SWCr** |  |  |  |  |  |  |
|  | 8501 | **RHD4-02-002-L02-(SWCr)-MH Works - 1200 mm diameter** |  |  |  |  |  |  |
|  | 8503 | **RHD4-02-002-L02-(SWCr)-MH Works - 1500 mm diameter** |  |  |  |  |  |  |
|  | 8496 | **RHD4-02-002-L02-(SWCr)-GRP Pipes - 700 mm diameter** |  |  |  |  |  |  |
|  | 8497 | **RHD4-02-002-L02-(SWCr)-UPVC Pipes - 200 mm diameter** |  |  |  |  |  |  |
|  | 8535 | **RHD4-02-002-Z9-L02-Crossings Potable Network - PTCr** |  |  |  |  |  |  |
|  | 8537 | **RHD4-02-002-L02-(PTCr)-HDPE Pipes - 160 mm diameter** |  |  |  |  |  |  |
|  | 8536 | **RHD4-02-002-L02-(PTCr)-HDPE Pipes - 110 mm diameter** |  |  |  |  |  |  |
|  | 8541 | **RHD4-02-002-L02-(PTCr)-Gate Valves (Direct Buried)** |  |  |  |  |  |  |
|  | 8544 | **RHD4-02-002-L02-(PTCr)-Wash out Valve Chambers** |  |  |  |  |  |  |
|  | 8545 | **RHD4-02-002-L02-(PTCr)-Wash out Valves** |  |  |  |  |  |  |
|  | 8582 | **RHD4-02-002-Z9-L02-Crossings Irrigation Network - IRRC** |  |  |  |  |  |  |
|  | 8583 | **RHD4-02-002-L02-(IRRC)-HDPE Pipes - 160 mm diameter** |  |  |  |  |  |  |
|  | 8590 | **RHD4-02-002-L02-(IRRC)-HDPE Pipes - 500 mm diameter** |  |  |  |  |  |  |
|  | 8591 | **RHD4-02-002-L02-(IRRC)-Gate Valves (Direct Buried)** |  |  |  |  |  |  |
|  | 8592 | **RHD4-02-002-L02-(IRRC)-Butterfly Valve Chamber** |  |  |  |  |  |  |
|  | 8593 | **RHD4-02-002-L02-(IRRC)-Butterfly Valves** |  |  |  |  |  |  |
|  | 8594 | **RHD4-02-002-L02-(IRRC)-Wash out Chamber** |  |  |  |  |  |  |
|  | 8595 | **RHD4-02-002-L02-(IRRC)-Wash out Valves** |  |  |  |  |  |  |
|  | 8639 | **RHD4-02-002-Z9-L02-Road Works - RD** |  | 2027-02-28 | 2028-03-23 |  |  |  |
|  | 8640 | **RHD4-02-002-L02-(RD)-Subgrade** |  | 2027-02-28 | 2027-03-15 |  |  |  |
| RHD4CZ9L02RD1100 |  | Supply, lay and compaction subgrade compacted thickness 300 mm for Roads - (RD-L-2)-Z9-L02-RD | 11d | 2027-02-28 | 2027-03-15 | RHD4ENSDZ9APPEW100, RHD4ENSDZ9APPRD220, RHD4CZ9L02ICT3400, RHD4CZ9L02TC3400 |  | -198d |
|  | 8641 | **RHD4-02-002-L02-(RD)-Aggregate Base Course** |  | 2027-03-16 | 2027-03-28 |  |  |  |
| RHD4CZ9L02RD2100 |  | Supply, lay and compaction Aggregate base course compacted thickness 300 mmfor Roads - (RD-L-2)-Z9-L02-RD | 11d | 2027-03-16 | 2027-03-28 | RHD4PRSHLDOSRD1000, RHD4PRSHLSTAGRD1000, RHD4CZ9L02RD1100 |  | -198d |
|  | 8642 | **RHD4-02-002-L02-(RD)-Bituminous base course Two Layers, including (MC1)&(RC2)** |  | 2027-03-29 | 2027-12-15 |  |  |  |
| RHD4CZ9L02RD3100 |  | Supply, lay and Asphaltic base course including Prime Coat (MC1) for 1st Layer - (RD-L-2)-Z9-L02-RD | 2d | 2027-03-29 | 2027-03-30 | RHD4PRSHLDOSRD1100, RHD4ENMSASPH2000, RHD4ENMSASPH2010, RHD4PRSHLSTAGRD1100, RHD4CZ9L02RD2100, RHD4CZ5L07RD3100, RHD4CZ7C02RD3100 |  | -198d |
| RHD4CZ9L02RD3200 |  | Supply, lay and Asphaltic base course including Tack Coat (RC2) for 2nd Layer - (RD-L-2)-Z9-L02-RD | 2d | 2027-12-13 | 2027-12-15 | RHD4PRSHLDOSRD1100, RHD4PRSHLSTAGRD1100, RHD4CZ9L02CCTV6100 |  | -140.02d |
|  | 8644 | **RHD4-02-002-L02-(RD)-Precast Concrete Curb** |  | 2028-02-03 | 2028-02-17 |  |  |  |
| RHD4CZ9L02RD5100 |  | Supply and installation Precast Concrete Kerb for Roads - (RD-L-2)-Z9-L02-RD | 13d | 2028-02-03 | 2028-02-17 | RHD4PRSHLDOSRD1200, RHD4ENMSRD2000, RHD4ENMSRD2010, RHD4PRSHLSTAGRD1200, RHD4CZ9L02RD3200, RHD4HOASZ1APPLV160 |  | -183d |
|  | 8647 | **RHD4-02-002-L02-(RD)-Traffic Signage** |  | 2028-02-19 | 2028-03-04 |  |  |  |
| RHD4CZ9L02RD8100 |  | Installation of Traffic Signage for Road Network - (RD-L-2)-Z9-L02-RD | 9d | 2028-02-19 | 2028-03-04 | RHD4PRSHLDOSRD1600, RHD4PRSHLSTAGRD1600, RHD4CZ9L02RD5100, RHD4CZ9L06RD8100 |  | -183d |
|  | 8645 | **RHD4-02-002-L02-(RD)-Precast Interlocking Block Pavers** |  | 2028-03-05 | 2028-03-16 |  |  |  |
| RHD4CZ9L02RD6100 |  | Interlocking block pavers for sidewalk-footpath for Side walks and Parking areas - (RD-L-2)-Z9-L02-RD | 11d | 2028-03-05 | 2028-03-16 | RHD4PRSHLDOSRD1300, RHD4ENMSRD2000, RHD4ENMSRD2010, RHD4PRSHLSTAGRD1300, RHD4CZ9L02RD8100 |  | -183d |
|  | 8643 | **RHD4-02-002-L02-(RD)-Bituminous concrete wearing course including tack coat (RC2)** |  | 2028-03-18 | 2028-03-19 |  |  |  |
| RHD4CZ9L02RD4100 |  | Supply, lay and compaction Asphaltic wearing course including tack Coat (RC2)for Road Network - (RD-L-2)-Z9-L02-RD | 2d | 2028-03-18 | 2028-03-19 | RHD4CZ9L02RD5100, RHD4CZ9L02RD6100 |  | -183d |
|  | 8646 | **RHD4-02-002-L02-(RD)-Pavement Marking** |  | 2028-03-20 | 2028-03-23 |  |  |  |
| RHD4CZ9L02RD7100 |  | Pavement Markings for Road Network - (RD-L-2)-Z9-L02-RD | 4d | 2028-03-20 | 2028-03-23 | RHD4PRSHLDOSRD1500, RHD4PRSHLSTAGRD1500, RHD4CZ9L02RD4100 |  | -183d |
|  | 8464 | **RHD4-02-002-Z9-L02-Storm Network - ST** |  | 2026-08-27 | 2027-04-21 |  |  |  |
|  | 8482 | **RHD4-02-002-L02-(ST)-MH Works - 1500 mm diameter** |  | 2026-09-12 | 2027-04-21 |  |  |  |
| RHD4CZ9L02ST3101 |  | Excavation and PC Blinding works for MH 1500 mm - (RD-L-2)-Z9-L02-ST | 5d | 2026-09-12 A | 2026-09-16 A | RHD4ENSDZ9APPST110, RHD4ENMSST2000, RHD4CZ9L02ST3102 | 100% |  |
| RHD4CZ9L02ST3201 |  | Installation of Base for MH 1500 mm - (RD-L-2)-Z9-L02-ST | 5d | 2026-09-22 A | 2026-10-24 A | RHD4PRSHLSTAGST1608, RHD4CZ9L02ST3101 | 100% |  |
| RHD4CZ9L02ST3301 |  | MH Ring and C.Slab works and Backfilling works for MH 1500 mm - (RD-L-2)-Z9-L02-ST | 5d | 2026-10-17 A | 2027-04-12 | RHD4PRSHLDOSST1608, RHD4CZ9L02ST3201 | 32% | -145.02d |
| RHD4CZ9L02ST3401 |  | Steel Cover for MH 1500 mm - (RD-L-2)-Z9-L02-ST | 3d | 2027-04-12 | 2027-04-15 | RHD4PRSHLDOSST1708, RHD4PRSHLSTAGST1708, RHD4CZ9L02ST3301 |  | -145.02d |
| RHD4CZ9L02ST3501 |  | Finishing, Benching, Testing works for MH 1500 mm - (RD-L-2)-Z9-L02-ST | 5d | 2027-04-15 | 2027-04-21 | RHD4CZ9L02ST3401 |  | -145.02d |
|  | 8481 | **RHD4-02-002-L02-(ST)-MH Works - 1200 mm diameter** |  | 2026-08-29 | 2027-04-20 |  |  |  |
| RHD4CZ9L02ST3100 |  | Excavation and PC Blinding works for MH 1200 mm - (RD-L-2)-Z9-L02-ST | 2d | 2026-08-29 A | 2026-09-16 A | RHD4ENSDZ9APPST110, RHD4ENMSST2000, RHD4ENMSST2010, RHD4CZ9L02ST3101 | 100% |  |
| RHD4CZ9L02ST3200 |  | Installation of Base for MH 1200 mm - (RD-L-2)-Z9-L02-ST | 2d | 2026-10-01 A | 2026-10-24 A | RHD4PRSHLSTAGST1608, RHD4CZ9L02ST3100 | 100% |  |
| RHD4CZ9L02ST3300 |  | MH Ring and C.Slab works and Backfilling works for MH 1200 mm - (RD-L-2)-Z9-L02-ST | 2d | 2026-10-17 A | 2027-04-08 | RHD4PRSHLDOSST1608, RHD4CZ9L02ST3200 | 20% | -111.02d |
| RHD4CZ9L02ST3400 |  | Steel Cover for MH 1200 mm - (RD-L-2)-Z9-L02-ST | 2d | 2027-04-15 | 2027-04-18 | RHD4PRSHLDOSST1708, RHD4PRSHLSTAGST1708, RHD4CZ9L02ST3300, RHD4CZ9L02ST2500 |  | -117.02d |
| RHD4CZ9L02ST3500 |  | Finishing, Benching, Testing works for MH 1200 mm - (RD-L-2)-Z9-L02-ST | 2d | 2027-04-18 | 2027-04-20 | RHD4CZ9L02ST3400 |  | -117.02d |
|  | 8483 | **RHD4-02-002-L02-(ST)-MH Works - 2000 mm diameter** |  | 2026-08-29 | 2027-04-14 |  |  |  |
| RHD4CZ9L02ST3102 |  | Excavation and PC Blinding works for MH 2000 mm - (RD-L-2)-Z9-L02-ST | 2d | 2026-08-29 A | 2026-09-15 A | RHD4ENSDZ9APPST110, RHD4ENMSST2000, RHD4CZ9L02ST2100 | 100% |  |
| RHD4CZ9L02ST3202 |  | Installation of Base for MH 2000 mm - (RD-L-2)-Z9-L02-ST | 3d | 2026-09-29 A | 2026-10-17 A | RHD4PRSHLSTAGST1608, RHD4CZ9L02ST3102 | 100% |  |
| RHD4CZ9L02ST3302 |  | MH Ring and C.Slab works and Backfilling works for MH 2000 mm - (RD-L-2)-Z9-L02-ST | 3d | 2027-04-06 | 2027-04-10 | RHD4PRSHLDOSST1608, RHD4CZ9L02ST3202 |  | -136.02d |
| RHD4CZ9L02ST3402 |  | Steel Cover for MH 2000 mm - (RD-L-2)-Z9-L02-ST | 2d | 2027-04-10 | 2027-04-12 | RHD4PRSHLDOSST1708, RHD4PRSHLSTAGST1708, RHD4CZ9L02ST3302 |  | -116.02d |
| RHD4CZ9L02ST3502 |  | Finishing, Benching, Testing works for MH 2000 mm - (RD-L-2)-Z9-L02-ST | 2d | 2027-04-12 | 2027-04-14 | RHD4CZ9L02ST3402 |  | -116.02d |
|  | 8473 | **RHD4-02-002-L02-(ST)-GRP Pipes - 1200 mm diameter** |  | 2026-08-27 | 2027-04-14 |  |  |  |
| RHD4CZ9L02ST1108 |  | Excavation works for GRP Pipe Line 1200 mm - (RD-L-2)-Z9-L02-ST | 2d | 2026-08-27 A | 2026-08-29 A | RHD4ENSDZ9APPST110, RHD4CZ9L02RW3000, RHD4CZ9C071ST1107 | 100% |  |
| RHD4CZ9L02ST1208 |  | Bedding works for GRP Pipe Line 1200 mm - (RD-L-2)-Z9-L02-ST | 2d | 2026-08-29 A | 2026-08-30 A | RHD4CZ9L02ST1108 | 100% |  |
| RHD4CZ9L02ST1308 |  | Installing for GRP Pipe Line 1200 mm - (RD-L-2)-Z9-L02-ST | 2d | 2026-09-01 A | 2026-09-23 A | RHD4PRSHLSTAGST1008, RHD4CZ9L02ST1208, RHD4CZ9L02ST3301, RHD4CZ9L02ST3302, RHD4PRSHLDOSST1608, RHD4PRSHLPOST1000, RHD4PRSHLDOSST1008, RHD4PRSHLDOSST1604, RHD4PRSHLDOSST1004 | 100% |  |
| RHD4CZ9L02ST1508 |  | Backfilling and warning tape works for GRP Pipe Line 1200 mm - (RD-L-2)-Z9-L02-ST | 2d | 2026-09-01 A | 2026-09-28 A | RHD4CZ9L02ST1408, RHD4CZ9L02ST1504, RHD4CZ9L02ST1506 | 100% |  |
| RHD4CZ9L02ST1408 |  | Primary Test for GRP Pipe Line 1200 mm - (RD-L-2)-Z9-L02-ST | 2d | 2027-04-12 | 2027-04-14 | RHD4CZ9L02ST1308 |  | -138.02d |
|  | 8472 | **RHD4-02-002-L02-(ST)-GRP Pipes - 1100 mm diameter** |  | 2026-08-29 | 2027-03-14 |  |  |  |
| RHD4CZ9L02ST1107 |  | Excavation works for GRP Pipe Line 1100 mm - (RD-L-2)-Z9-L02-ST | 2d | 2026-08-29 A | 2026-08-30 A | RHD4ENSDZ9APPST110, RHD4CZ9L02ST1108 SS | 100% |  |

| ID | WBS | Task | Duration | Start | Finish | Predecessors | Complete | Total float |
| --- | --- | --- | --- | --- | --- | --- | --- | --- |
| RHD4CZ9L02ST1207 |  | Bedding works for GRP Pipe Line 1100 mm - (RD-L-2)-Z9-L02-ST | 2d | 2026-09-05 A | 2026-09-06 A | RHD4CZ9L02ST1107, RHD4CZ9L02ST1208 | 100% |  |
| RHD4CZ9L02ST1307 |  | Installing for GRP Pipe Line 1100 mm - (RD-L-2)-Z9-L02-ST | 2d | 2026-09-07 A | 2026-09-08 A | RHD4PRSHLSTAGST1008, RHD4CZ9L02ST1207, RHD4PRSHLDOSST1608, RHD4PRSHLPOST1000, RHD4PRSHLDOSST1008, RHD4PRSHLDOSST1604, RHD4PRSHLDOSST1004 | 100% |  |
| RHD4CZ9L02ST1507 |  | Backfilling and warning tape works for GRP Pipe Line 1100 mm - (RD-L-2)-Z9-L02-ST | 2d | 2026-09-12 A | 2026-09-13 A | RHD4CZ9L02ST1407 | 100% |  |
| RHD4CZ9L02ST1407 |  | Primary Test for GRP Pipe Line 1100 mm - (RD-L-2)-Z9-L02-ST | 2d | 2027-03-08 | 2027-03-14 | RHD4CZ9L02ST1307 |  | -113.02d |
|  | 8471 | **RHD4-02-002-L02-(ST)-GRP Pipes - 1000 mm diameter** |  | 2026-08-29 | 2027-03-16 |  |  |  |
| RHD4CZ9L02ST1106 |  | Excavation works for GRP Pipe Line 1000 mm - (RD-L-2)-Z9-L02-ST | 2d | 2026-08-29 A | 2026-08-30 A | RHD4ENSDZ9APPST110, RHD4CZ9L02ST1107 | 100% |  |
| RHD4CZ9L02ST1206 |  | Bedding works for GRP Pipe Line 1000 mm - (RD-L-2)-Z9-L02-ST | 2d | 2026-09-19 A | 2026-09-20 A | RHD4CZ9L02ST1106, RHD4CZ9L02ST1207 | 100% |  |
| RHD4CZ9L02ST1306 |  | Installing for GRP Pipe Line 1000 mm - (RD-L-2)-Z9-L02-ST | 2d | 2026-09-20 A | 2026-09-21 A | RHD4PRSHLSTAGST1008, RHD4CZ9L02ST1206, RHD4CZ9L02ST1307, RHD4PRSHLDOSST1608, RHD4PRSHLPOST1000, RHD4PRSHLDOSST1008, RHD4PRSHLDOSST1604, RHD4PRSHLDOSST1004 | 100% |  |
| RHD4CZ9L02ST1506 |  | Backfilling and warning tape works for GRP Pipe Line 1000 mm - (RD-L-2)-Z9-L02-ST | 2d | 2026-09-22 A | 2026-09-22 A | RHD4CZ9L02ST1406, RHD4CZ9L02ST1507 | 100% |  |
| RHD4CZ9L02ST1406 |  | Primary Test for GRP Pipe Line 1000 mm - (RD-L-2)-Z9-L02-ST | 2d | 2027-03-14 | 2027-03-16 | RHD4CZ9L02ST1306, RHD4CZ9L02ST1407 |  | -113.02d |
|  | 8470 | **RHD4-02-002-L02-(ST)-GRP Pipes - 900 mm diameter** |  | 2026-08-29 | 2027-03-14 |  |  |  |
| RHD4CZ9L02ST1105 |  | Excavation works for GRP Pipe Line 900 mm - (RD-L-2)-Z9-L02-ST | 2d | 2026-08-29 A | 2026-08-30 A | RHD4ENSDZ9APPST110, RHD4CZ9L02ST1106 SS | 100% |  |
| RHD4CZ9L02ST1205 |  | Bedding works for GRP Pipe Line 900 mm - (RD-L-2)-Z9-L02-ST | 2d | 2026-09-01 A | 2026-09-02 A | RHD4CZ9L02ST1105 | 100% |  |
| RHD4CZ9L02ST1305 |  | Installing for GRP Pipe Line 900 mm - (RD-L-2)-Z9-L02-ST | 2d | 2026-09-03 A | 2026-09-19 A | RHD4PRSHLSTAGST1008, RHD4CZ9L02ST1205, RHD4PRSHLDOSST1608, RHD4PRSHLPOST1000, RHD4PRSHLDOSST1008, RHD4PRSHLDOSST1604, RHD4PRSHLDOSST1004 | 100% |  |
| RHD4CZ9L02ST1505 |  | Backfilling and warning tape works for GRP Pipe Line 900 mm - (RD-L-2)-Z9-L02-ST | 2d | 2026-09-20 A | 2026-09-21 A | RHD4CZ9L02ST1405 | 100% |  |
| RHD4CZ9L02ST1405 |  | Primary Test for GRP Pipe Line 900 mm - (RD-L-2)-Z9-L02-ST | 2d | 2027-03-08 | 2027-03-14 | RHD4CZ9L02ST1305 |  | -115.02d |
|  | 8469 | **RHD4-02-002-L02-(ST)-GRP Pipes - 800 mm diameter** |  | 2026-08-29 | 2027-03-21 |  |  |  |
| RHD4CZ9L02ST1104 |  | Excavation works for GRP Pipe Line 800 mm - (RD-L-2)-Z9-L02-ST | 2d | 2026-08-29 A | 2026-08-30 A | RHD4ENSDZ9APPST110, RHD4CZ9L02ST1105 SS | 100% |  |
| RHD4CZ9L02ST1204 |  | Bedding works for GRP Pipe Line 800 mm - (RD-L-2)-Z9-L02-ST | 2d | 2026-09-05 A | 2027-03-14 | RHD4CZ9L02ST1104 | 40% | -117.02d |
| RHD4CZ9L02ST1304 |  | Installing for GRP Pipe Line 800 mm - (RD-L-2)-Z9-L02-ST | 2d | 2026-09-07 A | 2027-03-16 | RHD4PRSHLSTAGST1008, RHD4CZ9L02ST1204, RHD4CZ9L02ST1305, RHD4PRSHLDOSST1608, RHD4PRSHLPOST1000, RHD4PRSHLDOSST1008, RHD4PRSHLDOSST1604, RHD4PRSHLDOSST1004 | 40% | -117.02d |
| RHD4CZ9L02ST1504 |  | Backfilling and warning tape works for GRP Pipe Line 800 mm - (RD-L-2)-Z9-L02-ST | 2d | 2026-09-12 A | 2027-03-21 | RHD4CZ9L02ST1404, RHD4CZ9L02ST1505 | 40% | -117.02d |
| RHD4CZ9L02ST1404 |  | Primary Test for GRP Pipe Line 800 mm - (RD-L-2)-Z9-L02-ST | 2d | 2027-03-16 | 2027-03-18 | RHD4CZ9L02ST1304, RHD4CZ9L02ST1405 |  | -117.02d |
|  | 8468 | **RHD4-02-002-L02-(ST)-GRP Pipes - 700 mm diameter** |  |  |  |  |  |  |
|  | 8467 | **RHD4-02-002-L02-(ST)-GRP Pipes - 600 mm diameter** |  | 2026-08-29 | 2027-03-14 |  |  |  |
| RHD4CZ9L02ST1102 |  | Excavation works for GRP Pipe Line 600 mm - (RD-L-2)-Z9-L02-ST | 2d | 2026-08-29 A | 2026-09-06 A | RHD4ENSDZ9APPST110, RHD4CZ9L02ST1104 SS | 100% |  |
| RHD4CZ9L02ST1202 |  | Bedding works for GRP Pipe Line 600 mm - (RD-L-2)-Z9-L02-ST | 2d | 2026-09-07 A | 2026-10-13 A | RHD4CZ9L02ST1102 | 100% |  |
| RHD4CZ9L02ST1302 |  | Installing for GRP Pipe Line 600 mm - (RD-L-2)-Z9-L02-ST | 2d | 2026-09-09 A | 2026-12-15 A | RHD4PRSHLSTAGST1008, RHD4CZ9L02ST1202, RHD4PRSHLDOSST1608, RHD4PRSHLPOST1000, RHD4PRSHLDOSST1008, RHD4PRSHLDOSST1604, RHD4PRSHLDOSST1004 | 100% |  |
| RHD4CZ9L02ST1502 |  | Backfilling and warning tape works for GRP Pipe Line 600 mm - (RD-L-2)-Z9-L02-ST | 2d | 2026-09-14 A | 2026-12-17 A | RHD4CZ9L02ST1402 | 100% |  |
| RHD4CZ9L02ST1402 |  | Primary Test for GRP Pipe Line 600 mm - (RD-L-2)-Z9-L02-ST | 2d | 2027-03-08 | 2027-03-14 | RHD4CZ9L02ST1302 |  | -96.02d |
|  | 8466 | **RHD4-02-002-L02-(ST)-GRP Pipes - 500 mm diameter** |  | 2026-09-01 | 2027-03-16 |  |  |  |
| RHD4CZ9L02ST1101 |  | Excavation works for GRP Pipe Line 500 mm - (RD-L-2)-Z9-L02-ST | 2d | 2026-09-01 A | 2026-09-02 A | RHD4ENSDZ9APPST110, RHD4CZ9L02ST1102 | 100% |  |
| RHD4CZ9L02ST1201 |  | Bedding works for GRP Pipe Line 500 mm - (RD-L-2)-Z9-L02-ST | 2d | 2026-09-09 A | 2026-09-10 A | RHD4CZ9L02ST1101, RHD4CZ9L02ST1202 | 100% |  |
| RHD4CZ9L02ST1301 |  | Installing for GRP Pipe Line 500 mm - (RD-L-2)-Z9-L02-ST | 2d | 2026-09-12 A | 2026-09-13 A | RHD4PRSHLSTAGST1008, RHD4CZ9L02ST1201, RHD4CZ9L02ST1302, RHD4PRSHLDOSST1608, RHD4PRSHLPOST1000, RHD4PRSHLDOSST1008, RHD4PRSHLDOSST1604, RHD4PRSHLDOSST1004 | 100% |  |
| RHD4CZ9L02ST1501 |  | Backfilling and warning tape works for GRP Pipe Line 500 mm - (RD-L-2)-Z9-L02-ST | 2d | 2026-09-16 A | 2026-09-17 A | RHD4CZ9L02ST1401, RHD4CZ9L02ST1502 | 100% |  |
| RHD4CZ9L02ST1401 |  | Primary Test for GRP Pipe Line 500 mm - (RD-L-2)-Z9-L02-ST | 2d | 2027-03-14 | 2027-03-16 | RHD4CZ9L02ST1301, RHD4CZ9L02ST1402 |  | -96.02d |
|  | 8479 | **RHD4-02-002-L02-(ST)-UPVC Pipes - 300 mm diameter** |  | 2026-09-19 | 2027-04-15 |  |  |  |
| RHD4CZ9L02ST2100 |  | Excavation works for UPVC Pipe Line 300 mm - (RD-L-2)-Z9-L02-ST | 3d | 2026-09-19 A | 2026-10-17 A | RHD4ENSDZ9APPST110, RHD4CZ9L02ST1101, RHD4CZ3C083ST7500, RHD4CZ5C051PT3200 | 100% |  |
| RHD4CZ9L02ST2200 |  | Bedding works for UPVC Pipe Line 300 mm - (RD-L-2)-Z9-L02-ST | 3d | 2026-09-21 A | 2027-04-08 | RHD4CZ9L02ST2100 | 90% | -140.02d |
| RHD4CZ9L02ST2300 |  | Installing for UPVC Pipe Line 300 mm - (RD-L-2)-Z9-L02-ST | 3d | 2026-09-22 A | 2027-04-11 | RHD4PRSHLDOSST1108, RHD4PRSHLSTAGST1108, RHD4CZ9L02ST2200 | 80% | -140.02d |
| RHD4CZ9L02ST2500 |  | Backfilling and warning tape works for UPVC Pipe Line 300 mm - (RD-L-2)-Z9-L02-ST | 3d | 2026-09-26 A | 2027-04-15 | RHD4CZ9L02ST2400, RHD4CZ9L02ST6100 | 80% | -140.02d |
| RHD4CZ9L02ST2400 |  | Primary Test for UPVC Pipe Line 300 mm - (RD-L-2)-Z9-L02-ST | 2d | 2027-04-11 | 2027-04-13 | RHD4CZ9L02ST2300, RHD4CZ9L02ST6100 |  | -140.02d |
|  | 8487 | **RHD4-02-002-L02-(ST)-Concrete Encasement** |  | 2027-04-08 | 2027-04-11 |  |  |  |
| RHD4CZ9L02ST6100 |  | Pipe Encasement for Storm Pipelines - (RD-L-2)-Z9-L02-ST | 2d | 2027-04-08 | 2027-04-11 | RHD4CZ9L02ST2300 SS, RHD4CZ9L02ST2300 FF, RHD4CZ9L02ST2200 |  | -140.02d |
|  | 8488 | **RHD4-02-002-Z9-L02-Catch Basin - ST** |  | 2026-09-15 | 2027-05-09 |  |  |  |
|  | 8489 | **RHD4-02-002-L02-(ST)-Single Catch Basin Works** |  | 2026-09-15 | 2027-05-09 |  |  |  |
| RHD4CZ9L02ST7100 |  | Excavation works for Single Catch Basin - (RD-L-2)-Z9-L02-ST | 4d | 2026-09-15 A | 2026-10-24 A | RHD4ENSDZ9APPST110, RHD4CZ9L02ST3300 | 100% |  |
| RHD4CZ9L02ST7200 |  | PC Blinding, Installation and Pipe connection for Single Catch Basin - (RD-L-2)-Z9-L02-ST | 4d | 2026-09-22 A | 2027-04-20 | RHD4CZ9L02ST7100 | 50% | -109.02d |
| RHD4CZ9L02ST7300 |  | Rings & C.Slab & Final Backfill for Single Catch Basin - (RD-L-2)-Z9-L02-ST | 5d | 2026-10-25 A | 2027-04-26 | RHD4PRSHLDOSST1308, RHD4PRSHLSTAGST1308, RHD4CZ9L02ST7200 | 35% | -109.02d |
| RHD4CZ9L02ST7400 |  | Steel Cover for Single Catch Basin - (RD-L-2)-Z9-L02-ST | 4d | 2027-04-26 | 2027-05-01 | RHD4PRSHLDOSST1708, RHD4CZ9L02ST7300 |  | -109.02d |
| RHD4CZ9L02ST7500 |  | Finishing and Insulation works for Single Catch Basin - (RD-L-2)-Z9-L02-ST | 7d | 2027-05-01 | 2027-05-09 | RHD4CZ9L02ST7400 |  | -109.02d |
|  | 8513 | **RHD4-02-002-Z9-L02-Sewage Network - SW** |  | 2026-08-15 | 2027-08-03 |  |  |  |
|  | 1895 | **RHD4-02-002-L02-(SW)-GRP Pipes - 500 mm diameter** |  | 2027-04-21 | 2027-05-03 |  |  |  |
| RHD4CZ9L02SW1102 |  | Excavation works for GRP Pipe Line 500 mm - (RD-L-2)-Z9-L02-SW | 2d | 2027-04-21 | 2027-04-24 | RHD4CZ9L02ST3501, RHD4CZ9L02ST2500 |  | -145.02d |
| RHD4CZ9L02SW1202 |  | Bedding works for GRP Pipe Line 500 mm - (RD-L-2)-Z9-L02-SW | 2d | 2027-04-24 | 2027-04-26 | RHD4CZ9L02SW1102 |  | -126.02d |
| RHD4CZ9L02SW1302 |  | Installing for GRP Pipe Line 500 mm - (RD-L-2)-Z9-L02-SW | 2d | 2027-04-26 | 2027-04-28 | RHD4CZ9L02SW1202 |  | -126.02d |
| RHD4CZ9L02SW1402 |  | Primary Test for GRP Pipe Line 500 mm - (RD-L-2)-Z9-L02-SW | 2d | 2027-04-28 | 2027-05-01 | RHD4CZ9L02SW1302 |  | -126.02d |
| RHD4CZ9L02SW1502 |  | Backfilling and warning tape works for GRP Pipe Line 500 mm - (RD-L-2)-Z9-L02-SW | 2d | 2027-05-01 | 2027-05-03 | RHD4CZ9L02SW1402 |  | -126.02d |
|  | 957 | **RHD4-02-002-L02-(SW)-MH Works - 1200 mm diameter with Back drop** |  | 2027-05-01 | 2027-05-11 |  |  |  |
| RHD4CZ9L02SW3101 |  | Excavation and PC Blinding works for MH 1200 mm - (RD-L-2)-Z9-L02-SW | 2d | 2027-05-01 | 2027-05-02 | RHD4CZ9L02SW2100, RHD4CZ5RA07PT3202 |  | -132d |
| RHD4CZ9L02SW3201 |  | Installation of Base for MH 1200 mm - (RD-L-2)-Z9-L02-SW | 2d | 2027-05-03 | 2027-05-04 | RHD4CZ9L02SW3101 |  | -132d |
| RHD4CZ9L02SW3301 |  | MH Ring and C.Slab works and Backfilling works for MH 1200 mm - (RD-L-2)-Z9-L02-SW | 2d | 2027-05-05 | 2027-05-06 | RHD4CZ9L02SW3201 |  | -132d |
| RHD4CZ9L02SW3401 |  | Steel Cover for MH 1200 mm - (RD-L-2)-Z9-L02-SW | 2d | 2027-05-08 | 2027-05-09 | RHD4CZ9L02SW3301 |  | -132d |
| RHD4CZ9L02SW3501 |  | Finishing, Benching, Testing works for MH 1200 mm - (RD-L-2)-Z9-L02-SW | 2d | 2027-05-10 | 2027-05-11 | RHD4CZ9L02SW3401, RHD4CZ9L02SW1502, RHD4CZ9L02ST1508 |  | -132d |
|  | 8523 | **RHD4-02-002-L02-(SW)-MH Works - 1200 mm diameter** |  | 2026-09-15 | 2027-08-03 |  |  |  |
| RHD4CZ9L02SW3100 |  | Excavation and PC Blinding works for MH 1200 mm - (RD-L-2)-Z9-L02-SW | 13d | 2026-09-15 A | 2027-05-24 | RHD4ENSDZ9APPSW120, RHD4CZ9L02SW3501, RHD4CZ9L02SW3101 | 66% | -132d |
| RHD4CZ9L02SW3200 |  | Installation of Base for MH 1200 mm - (RD-L-2)-Z9-L02-SW | 21d | 2026-09-19 A | 2027-06-05 | RHD4CZ9L02SW3100 | 30% | -110d |
| RHD4CZ9L02SW3300 |  | MH Ring and C.Slab works and Backfilling works for MH 1200 mm - (RD-L-2)-Z9-L02-SW | 21d | 2027-06-06 | 2027-06-29 | RHD4PRSHLDOSSW1308, RHD4PRSHLSTAGSW1308, RHD4CZ9L02SW3200 |  | -110d |
| RHD4CZ9L02SW3400 |  | Steel Cover for MH 1200 mm - (RD-L-2)-Z9-L02-SW | 9d | 2027-06-30 | 2027-07-10 | RHD4PRSHLDOSSW1408, RHD4PRSHLSTAGSW1408, RHD4CZ9L02SW3300 |  | -110d |
| RHD4CZ9L02SW3500 |  | Finishing, Benching, Testing works for MH 1200 mm - (RD-L-2)-Z9-L02-SW | 21d | 2027-07-11 | 2027-08-03 | RHD4CZ9L02SW3400 |  | -110d |
|  | 8518 | **RHD4-02-002-L02-(SW)-GRP Pipes - 700 mm diameter** |  |  |  |  |  |  |

| ID | WBS | Task | Duration | Start | Finish | Predecessors | Complete | Total float |
| --- | --- | --- | --- | --- | --- | --- | --- | --- |
|  | 8519 | **RHD4-02-002-L02-(SW)-UPVC Pipes - 200 mm diameter** |  | 2026-08-15 | 2027-06-03 |  |  |  |
| RHD4CZ9L02SW2100 |  | Excavation works for UPVC Pipe Line 200 mm - (RD-L-2)-Z9-L02-SW | 8d | 2026-08-15 A | 2027-04-26 | RHD4ENSDZ9APPSW120, RHD4CZ9L02SW1102 | 88% | -145.02d |
| RHD4CZ9L02SW2200 |  | Bedding works for UPVC Pipe Line 200 mm - (RD-L-2)-Z9-L02-SW | 7d | 2026-08-16 A | 2027-05-04 | RHD4CZ9L02SW2100 | 84% | -145.02d |
| RHD4CZ9L02SW2300 |  | Installing for UPVC Pipe Line 200 mm - (RD-L-2)-Z9-L02-SW | 9d | 2026-08-17 A | 2027-05-19 | RHD4PRSHLDOSSW1008, RHD4PRSHLSTAGSW1008, RHD4CZ9L02SW2200 | 84% | -145.02d |
| RHD4CZ9L02SW2500 |  | Backfilling and warning tape works for UPVC Pipe Line 200 mm - (RD-L-2)-Z9-L02-SW | 8d | 2026-08-18 A | 2027-06-03 | RHD4CZ9L02SW2400 | 84% | -145.02d |
| RHD4CZ9L02SW2400 |  | Primary Test for UPVC Pipe Line 200 mm - (RD-L-2)-Z9-L02-SW | 5d | 2027-05-19 | 2027-05-25 | RHD4CZ9L02SW2300 |  | -145.02d |
|  | 8522 | **RHD4-02-002-L02-(SW)-Concrete Encasement** |  |  |  |  |  |  |
|  | 8550 | **RHD4-02-002-Z9-L02-Potable Network - PT** |  | 2027-05-25 | 2027-08-23 |  |  |  |
|  | 8552 | **RHD4-02-002-L02-(PT)-HDPE Pipes - 160 mm diameter** |  | 2027-05-25 | 2027-07-11 |  |  |  |
| RHD4CZ9L02PT1101 |  | Excavation works for HDPE Pipline 160 mm - (RD-L-2)-Z9-L02-PT | 8d | 2027-05-25 | 2027-06-03 | RHD4ENSDZ9APPPT130, RHD4ENMSPT2000, RHD4CZ9L02SW2400, RHD4CZ9L02SW2100 |  | -141.02d |
| RHD4CZ9L02PT1201 |  | Bedding works for HDPE Pipline 160 mm - (RD-L-2)-Z9-L02-PT | 7d | 2027-06-03 | 2027-06-12 | RHD4CZ9L02PT1101 |  | -138.02d |
| RHD4CZ9L02PT1301 |  | Installing for HDPE Pipline 160 mm - (RD-L-2)-Z9-L02-PT | 11d | 2027-06-12 | 2027-06-24 | RHD4PRSHLDOSPT1000, RHD4PRSHLSTAGPT1000, RHD4CZ9L02PT1201 |  | -138.02d |
| RHD4CZ9L02PT1401 |  | Primary Test for HDPE Pipline 160 mm - (RD-L-2)-Z9-L02-PT | 5d | 2027-06-24 | 2027-06-30 | RHD4CZ9L02PT1301 |  | -138.02d |
| RHD4CZ9L02PT1501 |  | Backfilling and warning tape works for HDPE Pipline 160 mm - (RD-L-2)-Z9-L02-PT | 9d | 2027-06-30 | 2027-07-11 | RHD4CZ9L02PT1401 |  | -138.02d |
|  | 6478 | **RHD4-02-002-L02-(PT)-Wash out Valve Chambers** |  | 2027-06-03 | 2027-06-29 |  |  |  |
| RHD4CZ9L02PT2101 |  | Excavation and Bedding for Wash out Valve Chambers for Potable Water Network - (RD-L-2)-Z9-L02-PT | 2d | 2027-06-03 | 2027-06-06 | RHD4CZ9L02PT1101 |  | -121.02d |
| RHD4CZ9L02PT2201 |  | PC works for Wash out Valve Chambers for Potable Water Network - (RD-L-2)-Z9-L02-PT | 2d | 2027-06-06 | 2027-06-08 | RHD4CZ9L02PT2101 |  | -121.02d |
| RHD4CZ9L02PT2301 |  | Installation for Wash out Valve Chambers for Potable Water Network - (RD-L-2)-Z9-L02-PT | 2d | 2027-06-08 | 2027-06-10 | RHD4CZ9L02PT2201 |  | -121.02d |
| RHD4CZ9L02PT2401 |  | Backfilling works for Wash out Valve Chambers for Potable Water Network - (RD-L-2)-Z9-L02-PT | 2d | 2027-06-27 | 2027-06-29 | RHD4CZ9L02PT2301, RHD4CZ9L02PT5100 |  | -135.02d |
|  | 6479 | **RHD4-02-002-L02-(PT)-Wash out Valves** |  | 2027-06-24 | 2027-07-01 |  |  |  |
| RHD4CZ9L02PT3102 |  | Installation for Wash out Valves for Potable Water Network - (RD-L-2)-Z9-L02-PT | 2d | 2027-06-24 | 2027-06-27 | RHD4CZ9L02PT2301, RHD4CZ9L02PT1301 |  | -133.02d |
| RHD4CZ9L02PT3202 |  | Stem and Service box for Wash out Valves for Potable Water Network - (RD-L-2)-Z9-L02-PT | 2d | 2027-06-29 | 2027-07-01 | RHD4CZ9L02PT3102, RHD4CZ9L02PT2401, RHD4CZ9L02SW3501 |  | -135.02d |
|  | 6483 | **RHD4-02-002-L02-(PT)-Concrete Encasement** |  | 2027-06-24 | 2027-06-27 |  |  |  |
| RHD4CZ9L02PT5100 |  | Pipe Encasement for Potable Pipelines - (RD-L-2)-Z9-L02-PT | 2d | 2027-06-24 | 2027-06-27 | RHD4CZ9L02PT1301 |  | -135.02d |
|  | 8551 | **RHD4-02-002-L02-(PT)-HDPE Pipes - 110 mm diameter** |  | 2027-05-25 | 2027-07-05 |  |  |  |
| RHD4CZ9L02PT1100 |  | Excavation works for HDPE Pipline 110 mm - (RD-L-2)-Z9-L02-PT | 2d | 2027-05-25 | 2027-05-27 | RHD4ENSDZ9APPPT130, RHD4ENMSPT2000, RHD4CZ9L02PT1101 SS |  | -141.02d |
| RHD4CZ9L02PT1200 |  | Bedding works for HDPE Pipline 110 mm - (RD-L-2)-Z9-L02-PT | 2d | 2027-06-12 | 2027-06-14 | RHD4CZ9L02PT1100, RHD4CZ9L02PT1201 |  | -132.02d |
| RHD4CZ9L02PT1300 |  | Installing for HDPE Pipline 110 mm - (RD-L-2)-Z9-L02-PT | 2d | 2027-06-14 | 2027-06-16 | RHD4PRSHLDOSPT1000, RHD4PRSHLSTAGPT1000, RHD4CZ9L02PT1200 |  | -132.02d |
| RHD4CZ9L02PT1400 |  | Primary Test for HDPE Pipline 110 mm - (RD-L-2)-Z9-L02-PT | 2d | 2027-06-30 | 2027-07-03 | RHD4CZ9L02PT1300, RHD4CZ9L02PT1401 |  | -133.02d |
| RHD4CZ9L02PT1500 |  | Backfilling and warning tape works for HDPE Pipline 110 mm - (RD-L-2)-Z9-L02-PT | 2d | 2027-07-03 | 2027-07-05 | RHD4CZ9L02PT1400 |  | -133.02d |
|  | 8556 | **RHD4-02-002-L02-(PT)-Gate Valves (Direct Buried)** |  | 2027-06-17 | 2027-07-01 |  |  |  |
| RHD4CZ9L02PT3100 |  | Installation for Direct Buried Gate Valves - (RD-L-2)-Z9-L02-PT | 6d | 2027-06-17 | 2027-06-24 | RHD4PRSHLDOSPT1200, RHD4PRSHLSTAGPT1200, RHD4CZ9L02PT1301 FF, RHD4CZ9L02PT1300 FF, RHD4CZ9L02PT1301 SS, RHD4CZ9L02PT1300 SS |  | -135.02d |
| RHD4CZ9L02PT3200 |  | Stem and Service box for Direct Buried Gate Valves - (RD-L-2)-Z9-L02-PT | 6d | 2027-06-24 | 2027-07-01 | RHD4PRSHLDOSPT1300, RHD4PRSHLSTAGPT1300, RHD4CZ9L02PT3100 |  | -135.02d |
|  | 8561 | **RHD4-02-002-L02-(PT)-Air Valve Chambers** |  | 2027-05-27 | 2027-06-06 |  |  |  |
| RHD4CZ9L02PT2102 |  | Excavation and Bedding for Air Valve Chambers for Potable Water Network - (RD-L-2)-Z9-L02-PT | 2d | 2027-05-27 | 2027-05-30 | RHD4ENSDZ9APPPT130, RHD4CZ9L02PT1100 |  | -141.02d |
| RHD4CZ9L02PT2202 |  | PC works for Air Valve Chambers for Potable Water Network - (RD-L-2)-Z9-L02-PT | 2d | 2027-05-30 | 2027-06-01 | RHD4CZ9L02PT2102 |  | -141.02d |
| RHD4CZ9L02PT2302 |  | Installation for Air Valve Chambers for Potable Water Network - (RD-L-2)-Z9-L02-PT | 2d | 2027-06-01 | 2027-06-03 | RHD4PRSHLDOSPT1100, RHD4PRSHLDOSPT1400, RHD4PRSHLSTAGPT1100, RHD4PRSHLSTAGPT1400, RHD4CZ9L02PT2202 |  | -141.02d |
| RHD4CZ9L02PT2402 |  | Backfilling works for Air Valve Chambers for Potable Water Network - (RD-L-2)-Z9-L02-PT | 2d | 2027-06-03 | 2027-06-06 | RHD4CZ9L02PT2302 |  | -141.02d |
|  | 8562 | **RHD4-02-002-L02-(PT)-Air Valves** |  | 2027-06-03 | 2027-06-08 |  |  |  |
| RHD4CZ9L02PT3103 |  | Installation for Air Valves for Potable Water Network - (RD-L-2)-Z9-L02-PT | 2d | 2027-06-03 | 2027-06-06 | RHD4PRSHLDOSPT1200, RHD4PRSHLSTAGPT1200, RHD4CZ9L02PT2302 |  | -138.02d |
| RHD4CZ9L02PT3203 |  | Stem and Service box for Air Valves for Potable Water Network - (RD-L-2)-Z9-L02-PT | 2d | 2027-06-06 | 2027-06-08 | RHD4PRSHLDOSPT1300, RHD4PRSHLSTAGPT1300, RHD4CZ9L02PT3103, RHD4CZ9L02PT2402 |  | -138.02d |
|  | 8563 | **RHD4-02-002-L02-(PT)-Fire Hydrant** |  | 2027-07-11 | 2027-08-23 |  |  |  |
| RHD4CZ9L02PT4100 |  | Excavation and Bedding and Pipe Installation for Fire Hydrant - (RD-L-2)-Z9-L02-PT | 11d | 2027-07-11 | 2027-07-24 | RHD4ENSDZ9APPPT130, RHD4CZ9L02PT1501, RHD4CZ9L02PT1500 |  | -138.02d |
| RHD4CZ9L02PT4200 |  | Valve Installation for Fire Hydrant - (RD-L-2)-Z9-L02-PT | 7d | 2027-07-24 | 2027-08-01 | RHD4CZ9L02PT4100 |  | -138.02d |
| RHD4CZ9L02PT4300 |  | Stem for Fire Hydrant - (RD-L-2)-Z9-L02-PT | 7d | 2027-08-01 | 2027-08-09 | RHD4CZ9L02PT4200 |  | -138.02d |
| RHD4CZ9L02PT4400 |  | Fire Installation for Fire Hydrant - (RD-L-2)-Z9-L02-PT | 7d | 2027-08-09 | 2027-08-17 | RHD4PRSHLDOSPT1500, RHD4PRSHLSTAGPT1500, RHD4CZ9L02PT4300, RHD4CZ9L02PT3203 |  | -138.02d |
| RHD4CZ9L02PT4500 |  | Protection Barriers for Fire Hydrant - (RD-L-2)-Z9-L02-PT | 5d | 2027-08-17 | 2027-08-23 | RHD4CZ9L02PT4400 |  | -138.02d |
|  | 8565 | **RHD4-02-002-Z9-L02-Irrigation Network - IRR** |  | 2027-06-03 | 2027-09-16 |  |  |  |
|  | 8566 | **RHD4-02-002-L02-(IRR)-HDPE Pipes - 160 mm diameter** |  | 2027-06-07 | 2027-09-16 |  |  |  |
| RHD4CZ9L02IRR1100 |  | Excavation works for HDPE Pipline 160 mm - (RD-L-2)-Z9-L02-IRR | 12d | 2027-06-07 | 2027-06-21 | RHD4ENSDZ9APPIRR140, RHD4ENMSRR2000, RHD4CZ9L02IRR1107 |  | -139.02d |
| RHD4CZ9L02IRR1200 |  | Bedding works for HDPE Pipline 160 mm - (RD-L-2)-Z9-L02-IRR | 9d | 2027-06-21 | 2027-07-01 | RHD4CZ9L02IRR1100 |  | -138.02d |
| RHD4CZ9L02IRR1300 |  | Installing for HDPE Pipline 160 mm - (RD-L-2)-Z9-L02-IRR | 12d | 2027-08-19 | 2027-09-01 | RHD4PRSHLDOSIRR1000, RHD4PRSHLSTAGIRR1000, RHD4CZ9L02IRR1200, RHD4CZ7L015ST3500, RHD4CZ7RA05ICT2400, RHD4CZ7C02SW3500 |  | -180d |
| RHD4CZ9L02IRR1400 |  | Primary Test for HDPE Pipline 160 mm - (RD-L-2)-Z9-L02-IRR | 4d | 2027-09-02 | 2027-09-06 | RHD4CZ9L02IRR1300 |  | -180d |
| RHD4CZ9L02IRR1500 |  | Backfilling and warning tape works for HDPE Pipline 160 mm - (RD-L-2)-Z9-L02-IRR | 9d | 2027-09-07 | 2027-09-16 | RHD4CZ9L02IRR1400 |  | -180d |
|  | 6116 | **RHD4-02-002-L02-(IRR)-Butterfly Valve Chamber** |  | 2027-06-07 | 2027-06-16 |  |  |  |
| RHD4CZ9L02IRR2100 |  | Excavation and Bedding for Butterfly Valve Chamber for Irrigation Network - (RD-L-2)-Z9-L02-IRR | 2d | 2027-06-07 | 2027-06-09 | RHD4CZ9L02IRR3103 SS |  | -136.02d |
| RHD4CZ9L02IRR2200 |  | PC works for Butterfly Valve Chamber for Irrigation Network - (RD-L-2)-Z9-L02-IRR | 2d | 2027-06-09 | 2027-06-12 | RHD4CZ9L02IRR2100 |  | -136.02d |
| RHD4CZ9L02IRR2300 |  | Installation for Butterfly Valve Chamber for Irrigation Network - (RD-L-2)-Z9-L02-IRR | 2d | 2027-06-12 | 2027-06-14 | RHD4CZ9L02IRR2200 |  | -136.02d |
| RHD4CZ9L02IRR2400 |  | Backfilling works for Butterfly Valve Chamber for Irrigation Network - (RD-L-2)-Z9-L02-IRR | 2d | 2027-06-14 | 2027-06-16 | RHD4CZ9L02IRR2300 |  | -136.02d |
|  | 8573 | **RHD4-02-002-L02-(IRR)-HDPE Pipes - 500 mm diameter** |  | 2027-06-03 | 2027-06-17 |  |  |  |
| RHD4CZ9L02IRR1107 |  | Excavation works for HDPE Pipline 500 mm - (RD-L-2)-Z9-L02-IRR | 3d | 2027-06-03 | 2027-06-07 | RHD4ENSDZ9APPIRR140, RHD4ENMSRR2000, RHD4CZ9L02PT1101 |  | -139.02d |
| RHD4CZ9L02IRR1207 |  | Bedding works for HDPE Pipline 500 mm - (RD-L-2)-Z9-L02-IRR | 2d | 2027-06-07 | 2027-06-09 | RHD4CZ9L02IRR1107 |  | -134.02d |
| RHD4CZ9L02IRR1307 |  | Installing for HDPE Pipline 500 mm - (RD-L-2)-Z9-L02-IRR | 3d | 2027-06-09 | 2027-06-13 | RHD4PRSHLDOSIRR1000, RHD4PRSHLSTAGIRR1000, RHD4CZ9L02IRR1207 |  | -134.02d |
| RHD4CZ9L02IRR1407 |  | Primary Test for HDPE Pipline 500 mm - (RD-L-2)-Z9-L02-IRR | 2d | 2027-06-13 | 2027-06-15 | RHD4CZ9L02IRR1307 |  | -134.02d |
| RHD4CZ9L02IRR1507 |  | Backfilling and warning tape works for HDPE Pipline 500 mm - (RD-L-2)-Z9-L02-IRR | 2d | 2027-06-15 | 2027-06-17 | RHD4CZ9L02IRR1407 |  | -134.02d |
|  | 8574 | **RHD4-02-002-L02-(IRR)-Gate Valves (Direct Buried)** |  | 2027-08-25 | 2027-09-09 |  |  |  |
| RHD4CZ9L02IRR3100 |  | Installation for Direct Buried Gate Valves - (RD-L-2)-Z9-L02-IRR | 7d | 2027-08-25 | 2027-09-01 | RHD4PRSHLDOSIRR1100, RHD4PRSHLSTAGIRR1100, RHD4CZ9L02IRR1307 SS, RHD4CZ9L02IRR1307 FF, RHD4CZ9L02IRR1300 SS, RHD4CZ9L02IRR1300 FF |  | -178d |
| RHD4CZ9L02IRR3200 |  | Stem and Service box for Direct Buried Gate Valves - (RD-L-2)-Z9-L02-IRR | 7d | 2027-09-02 | 2027-09-09 | RHD4PRSHLDOSIRR1300, RHD4PRSHLSTAGIRR1300, RHD4CZ9L02IRR3100 |  | -178d |
|  | 8577 | **RHD4-02-002-L02-(IRR)-Wash out Chamber** |  | 2027-06-21 | 2027-07-05 |  |  |  |
| RHD4CZ9L02IRR2101 |  | Excavation and Bedding for Wash out Chamber for Irrigation Network - (RD-L-2)-Z9-L02-IRR | 3d | 2027-06-21 | 2027-06-24 | RHD4ENSDZ9APPIRR140, RHD4CZ9L02IRR1100 |  | -138.02d |

| ID | WBS | Task | Duration | Start | Finish | Predecessors | Total float |
| --- | --- | --- | --- | --- | --- | --- | --- |
| RHD4CZ9L02IRR2201 |  | PC works for Wash out Chamber for Irrigation Network - (RD-L-2)-Z9-L02-IRR | 3d | 2027-06-24 | 2027-06-28 | RHD4CZ9L02IRR2101 | -138.02d |
| RHD4CZ9L02IRR2301 |  | Installation for Wash out Chamber for Irrigation Network - (RD-L-2)-Z9-L02-IRR | 3d | 2027-06-28 | 2027-07-01 | RHD4PRSHLDOSIRR1200, RHD4PRSHLDOSIRR1400, RHD4PRSHLSTAGIRR1200, RHD4PRSHLSTAGIRR1400, RHD4CZ9L02IRR2201 | -138.02d |
| RHD4CZ9L02IRR2401 |  | Backfilling works for Wash out Chamber for Irrigation Network - (RD-L-2)-Z9-L02-IRR | 3d | 2027-07-01 | 2027-07-05 | RHD4CZ9L02IRR2301 | -138.02d |
|  | 8578 | **RHD4-02-002-L02-(IRR)-Wash out Valves** |  | 2027-06-07 | 2027-06-14 |  |  |
| RHD4CZ9L02IRR3102 |  | Installation for Wash out Valve for Irrigation Network - (RD-L-2)-Z9-L02-IRR | 3d | 2027-06-07 | 2027-06-10 | RHD4PRSHLDOSIRR1100, RHD4PRSHLSTAGIRR1100, RHD4CZ9L02IRR1100 SS | -136.02d |
| RHD4CZ9L02IRR3202 |  | Stem and Service box for Wash out Valve for Irrigation Network - (RD-L-2)-Z9-L02-IRR | 3d | 2027-06-10 | 2027-06-14 | RHD4PRSHLDOSIRR1300, RHD4PRSHLSTAGIRR1300, RHD4CZ9L02IRR3102 | -136.02d |
|  | 8579 | **RHD4-02-002-L02-(IRR)-Air Valve Chamber** |  | 2027-06-21 | 2027-06-30 |  |  |
| RHD4CZ9L02IRR2102 |  | Excavation and Bedding for Valve Chamber for Irrigation Network - (RD-L-2)-Z9-L02-IRR | 2d | 2027-06-21 | 2027-06-23 | RHD4ENSDZ9APPIRR140, RHD4CZ9L02IRR1100 | -139.02d |
| RHD4CZ9L02IRR2202 |  | PC works for Valve Chamber for Irrigation Network - (RD-L-2)-Z9-L02-IRR | 2d | 2027-06-23 | 2027-06-26 | RHD4CZ9L02IRR2102 | -139.02d |
| RHD4CZ9L02IRR2302 |  | Installation for Valve Chamber for Irrigation Network - (RD-L-2)-Z9-L02-IRR | 2d | 2027-06-26 | 2027-06-28 | RHD4PRSHLDOSIRR1200, RHD4PRSHLDOSIRR1400, RHD4PRSHLSTAGIRR1200, RHD4PRSHLSTAGIRR1400, RHD4CZ9L02IRR2202 | -139.02d |
| RHD4CZ9L02IRR2402 |  | Backfilling works for Valve Chamber for Irrigation Network - (RD-L-2)-Z9-L02-IRR | 2d | 2027-06-28 | 2027-06-30 | RHD4CZ9L02IRR2302 | -139.02d |
|  | 8580 | **RHD4-02-002-L02-(IRR)-Air Valves** |  | 2027-06-07 | 2027-07-03 |  |  |
| RHD4CZ9L02IRR3103 |  | Installation for Air Valves for Irrigation Network - (RD-L-2)-Z9-L02-IRR | 2d | 2027-06-07 | 2027-06-09 | RHD4PRSHLDOSIRR1100, RHD4PRSHLSTAGIRR1100, RHD4CZ9L02IRR3102 SS | -136.02d |
| RHD4CZ9L02IRR3203 |  | Stem and Service box for Air Valves for Irrigation Network - (RD-L-2)-Z9-L02-IRR | 2d | 2027-06-30 | 2027-07-03 | RHD4PRSHLDOSIRR1300, RHD4PRSHLSTAGIRR1300, RHD4CZ9L02IRR3103, RHD4CZ9L02IRR2402 | -139.02d |
|  | 6117 | **RHD4-02-002-L02-(IRR)-Butterfly Valves** |  | 2027-06-12 | 2027-06-16 |  |  |
| RHD4CZ9L02IRR3101 |  | Installation for Butterfly Valves for Irrigation Network - (RD-L-2)-Z9-L02-IRR | 2d | 2027-06-12 | 2027-06-14 | RHD4CZ9L02IRR2300 SS | -136.02d |
| RHD4CZ9L02IRR3201 |  | Stem and Service box for Butterfly Valves for Irrigation Network - (RD-L-2)-Z9-L02-IRR | 2d | 2027-06-14 | 2027-06-16 | RHD4CZ9L02IRR3101 | -136.02d |
|  | 8599 | **RHD4-02-002-Z9-L02-Medium Voltage Network - MV** |  | 2027-07-06 | 2027-09-01 |  |  |
|  | 8600 | **RHD4-02-002-L02-(MV)-Medium Voltage cable trench** |  | 2027-07-06 | 2027-08-24 |  |  |
| RHD4CZ9L02MV1100 |  | Excavation for Medium Voltage Trench - (RD-L-2)-Z9-L02-MV | 9d | 2027-07-06 | 2027-07-17 | RHD4ENSDZ9APPMV150, RHD4CZ9L02RD3100, RHD4CZ8A011MV1100 | -89.02d |
| RHD4CZ9L02MV1200 |  | Trench Backfilling for Medium Voltage Network - (RD-L-2)-Z9-L02-MV | 9d | 2027-08-14 | 2027-08-24 | RHD4CZ9L02MV3401, RHD4CZ9L02MV3400 | -78.02d |
|  | 8601 | **RHD4-02-002-L02-(MV)-Medium Voltage duct banks** |  | 2027-07-17 | 2027-08-10 |  |  |
| RHD4CZ9L02MV2100 |  | Excavation of Duct Banks for Medium Voltage Network - (RD-L-2)-Z9-L02-MV | 5d | 2027-07-17 | 2027-07-22 | RHD4ENSDZ9APPMV150, RHD4CZ9L02MV1100 | -80.02d |
| RHD4CZ9L02MV2200 |  | Installation of Duct Banks for Medium Voltage Network - (RD-L-2)-Z9-L02-MV | 7d | 2027-07-22 | 2027-07-31 | RHD4PRSHLDOSMV1000, RHD4PRSHLSTAGMV1000, RHD4CZ9L02MV2100 | -80.02d |
| RHD4CZ9L02MV2300 |  | Pouring of Duct Banks for Medium Voltage Network - (RD-L-2)-Z9-L02-MV | 5d | 2027-07-31 | 2027-08-05 | RHD4CZ9L02MV2200 | -80.02d |
| RHD4CZ9L02MV2400 |  | Backfilling of Duct Banks for Medium Voltage Network - (RD-L-2)-Z9-L02-MV | 4d | 2027-08-05 | 2027-08-10 | RHD4CZ9L02MV2300 | -80.02d |
|  | 8602 | **RHD4-02-002-L02-(MV)-Medium Voltage cables 3Cx 500 mm²** |  | 2027-07-17 | 2027-08-14 |  |  |
| RHD4CZ9L02MV3100 |  | Installation of Medium Voltage Cables 3Cx 500 mm² - (RD-L-2)-Z9-L02-MV | 9d | 2027-07-17 | 2027-07-27 | RHD4PRSHLDOSMV1100, RHD4ENMSMV2000, RHD4ENMSMV2010, RHD4PRSHLSTAGMV1100, RHD4CZ9L02MV1100 | -78.02d |
| RHD4CZ9L02MV3200 |  | Joints Installation of Medium Voltage Cables 3Cx 500 mm² - (RD-L-2)-Z9-L02-MV | 4d | 2027-07-27 | 2027-08-01 | RHD4PRSHLDOSMV1300, RHD4PRSHLSTAGMV1300, RHD4CZ9L02MV3100 | -78.02d |
| RHD4CZ9L02MV3300 |  | Testing of Medium Voltage Cables 3Cx 500 mm² - (RD-L-2)-Z9-L02-MV | 9d | 2027-08-01 | 2027-08-11 | RHD4CZ9L02MV3200 | -78.02d |
| RHD4CZ9L02MV3400 |  | Termination of Medium Voltage Cables 3Cx 500 mm² - (RD-L-2)-Z9-L02-MV | 2d | 2027-08-11 | 2027-08-14 | RHD4CZ9L02MV3300 | -78.02d |
|  | 8603 | **RHD4-02-002-L02-(MV)-Medium Voltage cables 3Cx 50 mm²** |  | 2027-07-17 | 2027-07-25 |  |  |
| RHD4CZ9L02MV3101 |  | Installation of Medium Voltage Cables 3Cx 50 mm² - (RD-L-2)-Z9-L02-MV | 2d | 2027-07-17 | 2027-07-19 | RHD4PRSHLDOSMV1200, RHD4ENMSMV2000, RHD4ENMSMV2010, RHD4PRSHLSTAGMV1200, RHD4CZ9L02MV1100 | -89.02d |
| RHD4CZ9L02MV3301 |  | Testing of Medium Voltage Cables 3Cx 50 mm² - (RD-L-2)-Z9-L02-MV | 2d | 2027-07-19 | 2027-07-21 | RHD4CZ9L02MV3101 | -89.02d |
| RHD4CZ9L02MV3401 |  | Termination of Medium Voltage Cables 3Cx 50 mm² - (RD-L-2)-Z9-L02-MV | 3d | 2027-07-21 | 2027-07-25 | RHD4CZ9L02MV3301 | -89.02d |
|  | 8604 | **RHD4-02-002-L02-(MV)-Normally open Point (Outdoor Type)** |  | 2027-08-24 | 2027-08-29 |  |  |
| RHD4CZ9L02MV4100 |  | Installation for Normally open Point - (RD-L-2)-Z9-L02-MV | 2d | 2027-08-24 | 2027-08-26 | RHD4PRSHLDOSMV1400, RHD4PRSHLSTAGMV1400, RHD4CZ9L02MV1200 | -78.02d |
| RHD4CZ9L02MV4200 |  | Termination for Normally open Point - (RD-L-2)-Z9-L02-MV | 2d | 2027-08-26 | 2027-08-29 | RHD4CZ9L02MV4100 | -78.02d |
|  | 8605 | **RHD4-02-002-L02-(MV)-Unit Substations** |  | 2027-07-25 | 2027-09-01 |  |  |
| RHD4CZ9L02MV5100 |  | Excavation for Unit Substations for Medium Voltage Network - (RD-L-2)-Z9-L02-MV | 5d | 2027-07-25 | 2027-07-31 | RHD4ENSDZ9APPMV150, RHD4CZ9L02RD3100, RHD4CZ9L02MV3401 | -89.02d |
| RHD4CZ9L02MV5200 |  | Concrete Base Placement for Unit Substations for Medium Voltage Network - (RD-L-2)-Z9-L02-MV | 5d | 2027-07-31 | 2027-08-05 | RHD4CZ9L02MV5100 | -89.02d |
| RHD4CZ9L02MV5300 |  | Installation for Fences and doors for Medium Voltage Network - (RD-L-2)-Z9-L02-MV | 13d | 2027-08-05 | 2027-08-21 | RHD4CZ9L02MV5200 | -89.02d |
| RHD4CZ9L02MV5400 |  | Installation for Unit Substations for Medium Voltage Network - (RD-L-2)-Z9-L02-MV | 10d | 2027-08-21 | 2027-09-01 | RHD4PRLOLSTAGMV1601, RHD4PRLOLSTAGMV1602, RHD4CZ9L02MV5300, RHD4CZ9L02MV2400 | -89.02d |
|  | 8606 | **RHD4-02-002-Z9-L02-Low Voltage Network - LV** |  | 2027-06-06 | 2027-07-26 |  |  |
|  | 8607 | **RHD4-02-002-L02-(LV)-Low Voltage duct banks** |  | 2027-06-06 | 2027-06-30 |  |  |
| RHD4CZ9L02LV2100 |  | Excavation of Duct Banks for Low Voltage Network - (RD-L-2)-Z9-L02-LV | 5d | 2027-06-06 | 2027-06-12 | RHD4ENSDZ9APPLV160, RHD4CZ9L02PT2402 | -141.02d |
| RHD4CZ9L02LV2200 |  | Installation of Duct Banks for Low Voltage Network - (RD-L-2)-Z9-L02-LV | 7d | 2027-06-12 | 2027-06-20 | RHD4PRSHLDOSLV1000, RHD4PRSHLSTAGLV1000, RHD4CZ9L02LV2100 | -141.02d |
| RHD4CZ9L02LV2300 |  | Pouring of Duct Banks for Low Voltage Network - (RD-L-2)-Z9-L02-LV | 5d | 2027-06-20 | 2027-06-26 | RHD4CZ9L02LV2200 | -141.02d |
| RHD4CZ9L02LV2400 |  | Backfilling of Duct Banks for Low Voltage Network - (RD-L-2)-Z9-L02-LV | 4d | 2027-06-26 | 2027-06-30 | RHD4CZ9L02LV2300 | -141.02d |
|  | 8608 | **RHD4-02-002-L02-(LV)-Low Voltage Drawpit** |  | 2027-06-26 | 2027-06-30 |  |  |
| RHD4CZ9L02LV5100 |  | Excavation of Drawpit size 900x900x1000mm for Low Voltage Network - (RD-L-2)-Z9-L02-LV | 2d | 2027-06-26 | 2027-06-28 | RHD4ENSDZ9APPLV160, RHD4CZ9L02LV2300 | -141.02d |
| RHD4CZ9L02LV5200 |  | Installation of Drawpit size 900x900x1000mm for Low Voltage Network - (RD-L-2)-Z9-L02-LV | 2d | 2027-06-28 | 2027-06-30 | RHD4PRSHLDOSLV1400, RHD4PRSHLSTAGLV1400, RHD4CZ9L02LV5100 | -141.02d |
|  | 8609 | **RHD4-02-002-L02-(LV)-Low Voltage cables** |  | 2027-06-30 | 2027-07-17 |  |  |
| RHD4CZ9L02LV3100 |  | Excavation for Low Voltage Cables for Low Voltage Network - (RD-L-2)-Z9-L02-LV | 4d | 2027-06-30 | 2027-07-05 | RHD4ENSDZ9APPLV160, RHD4CZ9L02LV5200, RHD4CZ9L02LV2400 | -141.02d |
| RHD4CZ9L02LV3200 |  | Cable Laying of Low Voltage Cables for Low Voltage Network - (RD-L-2)-Z9-L02-LV | 4d | 2027-07-05 | 2027-07-10 | RHD4PRSHLDOSLV1100, RHD4ENMSLV2000, RHD4ENMSLV2010, RHD4PRSHLSTAGLV1100, RHD4CZ9L02LV3100 | -141.02d |
| RHD4CZ9L02LV3300 |  | Warning tape and Backfill for Low Voltage Cables for Low Voltage Network - (RD-L-2)-Z9-L02-LV | 4d | 2027-07-10 | 2027-07-14 | RHD4CZ9L02LV3200 | -141.02d |
| RHD4CZ9L02LV3400 |  | Testing of Low Voltage Cables for Low Voltage Network - (RD-L-2)-Z9-L02-LV | 2d | 2027-07-14 | 2027-07-17 | RHD4CZ9L02LV3300 | -141.02d |
|  | 8610 | **RHD4-02-002-L02-(LV)-Low Voltage Distribution Pillars** |  | 2027-07-17 | 2027-07-26 |  |  |
| RHD4CZ9L02LV4100 |  | Leveling for Distribution Pillars for Low Voltage Network - (RD-L-2)-Z9-L02-LV | 3d | 2027-07-17 | 2027-07-20 | RHD4CZ9L02LV3400 | -141.02d |
| RHD4CZ9L02LV4200 |  | Lean Concrete for Distribution Pillars for Low Voltage Network - (RD-L-2)-Z9-L02-LV | 2d | 2027-07-20 | 2027-07-22 | RHD4CZ9L02LV4100 | -141.02d |
| RHD4CZ9L02LV4300 |  | Installation of Distribution Pillars for Low Voltage Network - (RD-L-2)-Z9-L02-LV | 3d | 2027-07-22 | 2027-07-26 | RHD4PRSHLDOSLV1200, RHD4PRSHLDOSLV1300, RHD4PRSHLSTAGLV1200, RHD4PRSHLSTAGLV1300, RHD4CZ9L02LV4200 | -141.02d |
|  | 8611 | **RHD4-02-002-L02-(LV)-Low Voltage Distribution Pillars Earthing** |  |  |  |  |  |
|  | 8612 | **RHD4-02-002-Z9-L02-Street Lighting Network - SL** |  | 2027-06-12 | 2027-11-28 |  |  |
|  | 8613 | **RHD4-02-002-L02-(SL)-Street Lighting duct banks** |  | 2027-06-12 | 2027-07-21 |  |  |
| RHD4CZ9L02SL2100 |  | Excavation of Duct Banks for Street Lighting Network - (RD-L-2)-Z9-L02-SL | 8d | 2027-06-12 | 2027-06-21 | RHD4ENSDZ9APPSL170, RHD4CZ9L02LV2100 | -137.02d |
| RHD4CZ9L02SL2200 |  | Installation of Duct Banks for Street Lighting Network - (RD-L-2)-Z9-L02-SL | 12d | 2027-06-21 | 2027-07-05 | RHD4PRSHLDOSSL1000, RHD4PRSHLSTAGSL1000, RHD4CZ9L02SL2100 | -137.02d |
| RHD4CZ9L02SL2300 |  | Pouring of Duct Banks for Street Lighting Network - (RD-L-2)-Z9-L02-SL | 8d | 2027-07-05 | 2027-07-14 | RHD4CZ9L02SL2200 | -137.02d |
| RHD4CZ9L02SL2400 |  | Backfilling of Duct Banks for Street Lighting Network - (RD-L-2)-Z9-L02-SL | 6d | 2027-07-14 | 2027-07-21 | RHD4CZ9L02SL2300 | -137.02d |
|  | 8614 | **RHD4-02-002-L02-(SL)-Street Lighting Drawpit** |  | 2027-07-26 | 2027-07-31 |  |  |
| RHD4CZ9L02SL5100 |  | Excavation of Drawpit size 600x600x900mm for Street Lighting Network - (RD-L-2)-Z9-L02-SL | 2d | 2027-07-26 | 2027-07-28 | RHD4ENSDZ9APPSL170, RHD4CZ9L02SL2400, RHD4CZ9L02SL2300, RHD4CZ9L02LV4300 | -141.02d |

| ID | WBS | Task | Duration | Start | Finish | Predecessors | Total float |
| --- | --- | --- | --- | --- | --- | --- | --- |
| RHD4CZ9L02SL5200 |  | Installation of Drawpit size 600x600x900mm for Street Lighting Network - (RD-L-2)-Z9-L02-SL | 2d | 2027-07-28 | 2027-07-31 | RHD4PRSHLDOSSL1400, RHD4PRSHLSTAGSL1400, RHD4CZ9L02SL5100 | -141.02d |
|  | 8615 | **RHD4-02-002-L02-(SL)-Street Lighting cables** |  | 2027-07-31 | 2027-09-28 |  |  |
| RHD4CZ9L02SL3100 |  | Excavation for Street Lighting Cables for Street Lighting Network - (RD-L-2)-Z9-L02-SL | 16d | 2027-07-31 | 2027-08-18 | RHD4ENSDZ9APPSL170, RHD4CZ9L02SL5200 | -141.02d |
| RHD4CZ9L02SL3200 |  | Cable Laying of Street Lighting Cables for Street Lighting Network - (RD-L-2)-Z9-L02-SL | 13d | 2027-08-18 | 2027-09-02 | RHD4PRSHLDOSSL1100, RHD4ENMSSL2000, RHD4ENMSSL2010, RHD4PRSHLSTAGSL1100, RHD4CZ9L02SL3100 | -103.02d |
| RHD4CZ9L02SL3300 |  | Warning tape and Backfill for Street Lighting Cables for Street Lighting Network - (RD-L-2)-Z9-L02-SL | 13d | 2027-09-02 | 2027-09-18 | RHD4CZ9L02SL3200 | -103.02d |
| RHD4CZ9L02SL3400 |  | Testing of Street Lighting Cables for Street Lighting Network - (RD-L-2)-Z9-L02-SL | 8d | 2027-09-18 | 2027-09-28 | RHD4CZ9L02SL3300, RHD4CZ9L02MV5400 | -103.02d |
|  | 8616 | **RHD4-02-002-L02-(SL)-Street Lighting Poles** |  | 2027-09-28 | 2027-11-18 |  |  |
| RHD4CZ9L02SL1100 |  | Excavation for RC Base for Lighting Poles for Street Lighting Network - (RD-L-2)-Z9-L02-SL | 8d | 2027-09-28 | 2027-10-07 | RHD4ENSDZ9APPSL170, RHD4CZ9L02SL3400, RHD4CZ9L02MV4200 | -103.02d |
| RHD4CZ9L02SL1200 |  | Installation for RC Base for Lighting Poles for Street Lighting Network - (RD-L-2)-Z9-L02-SL | 8d | 2027-10-07 | 2027-10-17 | RHD4CZ9L02SL1100 | -103.02d |
| RHD4CZ9L02SL1300 |  | Backfill for RC Base for Lighting Poles for Street Lighting Network - (RD-L-2)-Z9-L02-SL | 8d | 2027-10-17 | 2027-10-26 | RHD4CZ9L02SL1200 | -103.02d |
| RHD4CZ9L02SL1400 |  | Installation for Lighting Poles for Street Lighting Network - (RD-L-2)-Z9-L02-SL | 12d | 2027-10-26 | 2027-11-09 | RHD4PRSHLDOSSL1200, RHD4ENMSSL2000, RHD4ENMSSL2010, RHD4PRSHLSTAGSL1200, RHD4CZ9L02SL1300, RHD4CZ9L02SL3400 | -103.02d |
| RHD4CZ9L02SL1500 |  | Luminaire Installation for Lighting Poles for Street Lighting Network - (RD-L-2)-Z9-L02-SL | 8d | 2027-11-09 | 2027-11-18 | RHD4PRSHLDOSSL1300, RHD4PRSHLSTAGSL1300, RHD4CZ9L02SL1400 | -103.02d |
|  | 8617 | **RHD4-02-002-L02-(SL)-Street Lighting Feeder Pillars** |  | 2027-11-18 | 2027-11-25 |  |  |
| RHD4CZ9L02SL4100 |  | Leveling for Distribution Pillars for Street Lighting Network - (RD-L-2)-Z9-L02-SL | 2d | 2027-11-18 | 2027-11-21 | RHD4CZ9L02SL1500 | -103.02d |
| RHD4CZ9L02SL4200 |  | Lean Concrete for Distribution Pillars for Street Lighting Network - (RD-L-2)-Z9-L02-SL | 2d | 2027-11-21 | 2027-11-23 | RHD4CZ9L02SL4100 | -103.02d |
| RHD4CZ9L02SL4300 |  | Installation of Distribution Pillars for Street Lighting Network - (RD-L-2)-Z9-L02-SL | 2d | 2027-11-23 | 2027-11-25 | RHD4CZ9L02SL4200, RHD4CZ9L02SL1400 | -103.02d |
|  | 8618 | **RHD4-02-002-L02-(SL)-Street Lighting Earthing System** |  | 2027-11-25 | 2027-11-28 |  |  |
| RHD4CZ9L02SL6100 |  | Installation of Earthing for Lighting Poles and Fedder Pillers for Street Lighting Network - (RD-L-2)-Z9-L02-SL | 2d | 2027-11-25 | 2027-11-28 | RHD4ENMSER2000, RHD4ENMSER2010, RHD4CZ9L02SL4300 | -103.02d |
|  | 8624 | **RHD4-02-002-Z9-L02-Telecommunications Network - TC** |  | 2027-01-26 | 2027-09-16 |  |  |
|  | 8625 | **RHD4-02-002-L02-(TC)-Telecommunications Ducts** |  | 2027-07-31 | 2027-08-31 |  |  |
| RHD4CZ9L02TC2100 |  | Excavation of HDPE Ducts for Telecom Network - (RD-L-2)-Z9-L02-TC | 9d | 2027-07-31 | 2027-08-10 | RHD4ENSDZ9APPTC190, RHD4CZ9L02SL3100 SS | -141.02d |
| RHD4CZ9L02TC2200 |  | Installation of HDPE Ducts for Telecom Network - (RD-L-2)-Z9-L02-TC | 9d | 2027-08-10 | 2027-08-21 | RHD4PRSHLDOSTC1000, RHD4PRSHLSTAGTC1000, RHD4CZ9L02TC2100 | -141.02d |
| RHD4CZ9L02TC2400 |  | Backfilling of HDPE Ducts for Telecom Network - (RD-L-2)-Z9-L02-TC | 9d | 2027-08-21 | 2027-08-31 | RHD4CZ9L02TC2200 | -141.02d |
|  | 8626 | **RHD4-02-002-L02-(TC)-Telecommunications Manholes** |  | 2027-08-31 | 2027-09-16 |  |  |
| RHD4CZ9L02TC5100 |  | Excavation for Manholes for Telecom Network - (RD-L-2)-Z9-L02-TC | 7d | 2027-08-31 | 2027-09-08 | RHD4ENSDZ9APPTC190, RHD4CZ9L02TC2400 | -141.02d |
| RHD4CZ9L02TC5200 |  | Installation of Manholes for Telecom Network - (RD-L-2)-Z9-L02-TC | 7d | 2027-09-08 | 2027-09-16 | RHD4PRSHLDOSTC1200, RHD4PRSHLSTAGTC1200, RHD4CZ9L02TC5100, RHD4CZ9L02PT3202, RHD4CZ9L06ST1502 | -141.02d |
|  | 8627 | **RHD4-02-002-L02-(TC)-Telecomminications Road Crossings** |  | 2027-01-26 | 2027-02-03 |  |  |
| RHD4CZ9L02TC3100 |  | Excavation for Road Crossings for Telecom Network - (RD-L-2)-Z9-L02-TC | 2d | 2027-01-26 | 2027-01-27 | RHD4ENSDZ9APPTC190, RHD4CZ9L05ST7100 | -187d |
| RHD4CZ9L02TC3200 |  | Installation of Road Crossings for Telecom Network - (RD-L-2)-Z9-L02-TC | 2d | 2027-01-28 | 2027-01-30 | RHD4PRSHLDOSTC1100, RHD4PRSHLSTAGTC1100, RHD4CZ9L02TC3100 | -186d |
| RHD4CZ9L02TC3300 |  | Pouring of Road Crossings for Telecom Network - (RD-L-2)-Z9-L02-TC | 2d | 2027-01-31 | 2027-02-01 | RHD4CZ9L02TC3200 | -179d |
| RHD4CZ9L02TC3400 |  | Backfilling of Road Crossings for Telecom Network - (RD-L-2)-Z9-L02-TC | 2d | 2027-02-02 | 2027-02-03 | RHD4CZ9L02TC3300 | -179d |
|  | 8628 | **RHD4-02-002-Z9-L02-Information and Communication Technologies - ICT** |  | 2027-01-28 | 2027-11-11 |  |  |
|  | 8629 | **RHD4-02-002-L02-(ICT)-Information and Communication Technologies Ducts** |  | 2027-09-08 | 2027-10-19 |  |  |
| RHD4CZ9L02ICT2100 |  | Excavation of HDPE Ducts for ICT Network - (RD-L-2)-Z9-L02-ICT | 10d | 2027-09-08 | 2027-09-20 | RHD4ENSDZ9APPICT200, RHD4PRSHLDOSST1501, RHD4PRSHLDOSRD1300, RHD4PRSHLDOSST1504, RHD4PRSHLSTAGRD1300, RHD4CZ9L02TC5100 | -140.02d |
| RHD4CZ9L02ICT2200 |  | Installation of HDPE Ducts for ICT Network - (RD-L-2)-Z9-L02-ICT | 14d | 2027-09-20 | 2027-10-07 | RHD4PRSHLDOSICT1000, RHD4PRSHLSTAGICT1000, RHD4CZ9L02ICT2100 | -140.02d |
| RHD4CZ9L02ICT2400 |  | Backfilling of HDPE Ducts for ICT Network - (RD-L-2)-Z9-L02-ICT | 10d | 2027-10-07 | 2027-10-19 | RHD4CZ9L02ICT2200 | -140.02d |
|  | 8630 | **RHD4-02-002-L02-(ICT)-Information and Communication Technologies Manholes** |  | 2027-10-19 | 2027-11-11 |  |  |
| RHD4CZ9L02ICT5100 |  | Excavation for Manholes for ICT Network - (RD-L-2)-Z9-L02-ICT | 10d | 2027-10-19 | 2027-10-31 | RHD4ENSDZ9APPICT200, RHD4CZ9L02ICT2400 | -140.02d |
| RHD4CZ9L02ICT5200 |  | Installation of Manholes for ICT Network - (RD-L-2)-Z9-L02-ICT | 10d | 2027-10-31 | 2027-11-11 | RHD4PRSHLDOSICT1200, RHD4PRSHLSTAGICT1200, RHD4CZ9L02ICT5100 | -140.02d |
|  | 8631 | **RHD4-02-002-L02-(ICT)-Information and Communication Technologies Road Crossings** |  | 2027-01-28 | 2027-02-27 |  |  |
| RHD4CZ9L02ICT3100 |  | Excavation for Road Crossings for ICT Network - (RD-L-2)-Z9-L02-ICT | 3d | 2027-01-28 | 2027-01-31 | RHD4ENSDZ9APPICT200, RHD4CZ9L02TC3100 | -187d |
| RHD4CZ9L02ICT3200 |  | Installation of Road Crossings for ICT Network - (RD-L-2)-Z9-L02-ICT | 4d | 2027-02-14 | 2027-02-17 | RHD4PRSHLDOSICT1100, RHD4PRSHLSTAGICT1100, RHD4CZ9L02ICT3100, RHD4CZ9L02TC3200 | -198d |
| RHD4CZ9L02ICT3300 |  | Pouring of Road Crossings for ICT Network - (RD-L-2)-Z9-L02-ICT | 4d | 2027-02-18 | 2027-02-23 | RHD4CZ9L02ICT3200 | -198d |
| RHD4CZ9L02ICT3400 |  | Backfilling of Road Crossings for ICT Network - (RD-L-2)-Z9-L02-ICT | 3d | 2027-02-24 | 2027-02-27 | RHD4CZ9L02ICT3300 | -198d |
|  | 8619 | **RHD4-02-002-Z9-L02-Landscape Network - LS** |  |  |  |  |  |
|  | 8620 | **RHD4-02-002-L02-(LS)-Landscape Lighting cables** |  |  |  |  |  |
|  | 8621 | **RHD4-02-002-L02-(LS)-Landscape Feeder Pillars** |  |  |  |  |  |
|  | 8622 | **RHD4-02-002-L02-(LS)-Landscape Bollard Poles** |  |  |  |  |  |
|  | 8623 | **RHD4-02-002-L02-(LS)-Landscape Feeder Pillars Earthing** |  |  |  |  |  |
|  | 8632 | **RHD4-02-002-Z9-L02-Security Network - CCTV** |  | 2027-11-11 | 2027-12-13 |  |  |
|  | 8633 | **RHD4-02-002-L02-(CCTV)-Civil Works** |  | 2027-11-11 | 2027-11-17 |  |  |
| RHD4CZ9L02CCTV2100 |  | Civil Works for Security Network - (RD-L-2)-Z9-L02-CCTV | 5d | 2027-11-11 | 2027-11-17 | RHD4CZ9L02ICT5200 | -140.02d |
|  | 8634 | **RHD4-02-002-L02-(CCTV)-CCTV Poles** |  | 2027-11-17 | 2027-11-29 |  |  |
| RHD4CZ9L02CCTV1100 |  | Excavation for RC Base for CCTV Poles for Security Network - (RD-L-2)-Z9-L02-CCTV | 2d | 2027-11-17 | 2027-11-20 | RHD4ENSDZ9APPCCTV210, RHD4CZ9L02CCTV2100 | -140.02d |
| RHD4CZ9L02CCTV1200 |  | Installation for RC Base for CCTV Poles for Security Network - (RD-L-2)-Z9-L02-CCTV | 2d | 2027-11-20 | 2027-11-22 | RHD4PRSHLSTAGLS1000, RHD4PRSHLPOSL1300 SS, RHD4GNPPMAT1100, RHD4ENMARSUBSL400 SS, RHD4GNPPSD1100, RHD4ENSDZ9SUBCCTV210 SS, RHD4CZ9L02CCTV1100 | -140.02d |
| RHD4CZ9L02CCTV1300 |  | Backfill for RC Base for CCTV Poles for Security Network - (RD-L-2)-Z9-L02-CCTV | 2d | 2027-11-22 | 2027-11-24 | RHD4CZ9L02CCTV1200 | -140.02d |
| RHD4CZ9L02CCTV1400 |  | Installation for CCTV Poles for Security Network - (RD-L-2)-Z9-L02-CCTV | 2d | 2027-11-24 | 2027-11-27 | RHD4PRSHLDOSCCTV1000, RHD4PRSHLSTACCTV1000, RHD4CZ9L02CCTV1300 | -140.02d |
| RHD4CZ9L02CCTV1500 |  | Protection post Installation for CCTV Poles for Security Network - (RD-L-2)-Z9-L02-CCTV | 2d | 2027-11-27 | 2027-11-29 | RHD4CZ9L02CCTV1400 | -137.02d |
|  | 8635 | **RHD4-02-002-L02-(CCTV)-Camera** |  | 2027-11-29 | 2027-12-01 |  |  |
| RHD4CZ9L02CCTV3100 |  | Installation for Cameras for Security Network - (RD-L-2)-Z9-L02-CCTV | 2d | 2027-11-29 | 2027-12-01 | RHD4PRSHLDOSCCTV1100, RHD4PRSHLSTACCTV1100, RHD4CZ9L02CCTV1400, RHD4CZ9L02CCTV4100 | -140.02d |
|  | 8636 | **RHD4-02-002-L02-(CCTV)-Power and Infrastructure** |  | 2027-11-27 | 2027-11-29 |  |  |
| RHD4CZ9L02CCTV4100 |  | Installation of Power outlet, UPS and midspan for PTZ Camerafor Cameras for Security Network - (RD-L-2)-Z9-L02-CCTV | 2d | 2027-11-27 | 2027-11-29 | RHD4PRSHLDOSCCTV1300, RHD4PRSHLSTACCTV1300, RHD4CZ9L02CCTV1400 | -140.02d |
|  | 8638 | **RHD4-02-002-L02-(CCTV)-CCTV Panels and Components** |  | 2027-12-01 | 2027-12-13 |  |  |
| RHD4CZ9L02CCTV6100 |  | Installation for CCTV Panels for Security Network - (RD-L-2)-Z9-L02-CCTV | 10d | 2027-12-01 | 2027-12-13 | RHD4PRSHLDOSCCTV1200, RHD4PRSHLSTACCTV1200, RHD4PRLOLSTACCTV1001, RHD4CZ9L02CCTV3100 | -140.02d |
|  | 5622 | **RHD4-02-002-Z7** |  | 2026-06-11 | 2028-06-07 |  |  |
|  | 6190 | **RHD4-02-002-Z7-C032** |  | 2027-02-14 | 2027-09-20 |  |  |
|  | 6265 | **RHD4-02-002-Z7-C032-Crossings Potable Network - PTCr** |  |  |  |  |  |
|  | 6268 | **RHD4-02-002-C032-(PTCr)-HDPE Pipes - 200 mm diameter** |  |  |  |  |  |
|  | 6271 | **RHD4-02-002-C032-(PTCr)-Gate Valves (Direct Buried)** |  |  |  |  |  |
|  | 6278 | **RHD4-02-002-C032-(PTCr)-Fire Hydrant** |  |  |  |  |  |

| ID | WBS | Task | Duration | Start | Finish | Predecessors | Total float |
| --- | --- | --- | --- | --- | --- | --- | --- |
|  | 6312 | **RHD4-02-002-Z7-C032-Crossings Irrigation Network - IRRC** |  |  |  |  |  |
|  | 6313 | **RHD4-02-002-C032-(IRRC)-HDPE Pipes - 160 mm diameter** |  |  |  |  |  |
|  | 6321 | **RHD4-02-002-C032-(IRRC)-Gate Valves (Direct Buried)** |  |  |  |  |  |
|  | 6324 | **RHD4-02-002-C032-(IRRC)-Wash out Chamber** |  |  |  |  |  |
|  | 6325 | **RHD4-02-002-C032-(IRRC)-Wash out Valves** |  |  |  |  |  |
|  | 6326 | **RHD4-02-002-C032-(IRRC)-Air Valve Chamber** |  |  |  |  |  |
|  | 6327 | **RHD4-02-002-C032-(IRRC)-Air Valves** |  |  |  |  |  |
|  | 6369 | **RHD4-02-002-Z7-C032-Road Works - RD** |  | 2027-02-27 | 2027-09-20 |  |  |
|  | 6370 | **RHD4-02-002-C032-(RD)-Subgrade** |  | 2027-02-27 | 2027-03-04 |  |  |
| RHD4CZ7C032RD1100 |  | Supply, lay and compaction subgrade compacted thickness 300 mm for Roads - (RD-C-3/2)-Z7-C032-RD | 6d | 2027-02-27 | 2027-03-04 | RHD4ENSDZ7APPEW100, RHD4ENSDZ7APPRD220, RHD4CZ7C032ICT3400, RHD4CZ7C032TC3400, RHD4CZ4L09ST3502, RHD4CZ5L08ST7500 | -188d |
|  | 6371 | **RHD4-02-002-C032-(RD)-Aggregate Base Course** |  | 2027-03-06 | 2027-03-14 |  |  |
| RHD4CZ7C032RD2100 |  | Supply, lay and compaction Aggregate base course compacted thickness 300 mmfor Roads - (RD-C-3/2)-Z7-C032-RD | 5d | 2027-03-06 | 2027-03-14 | RHD4PRSHLDOSRD1000, RHD4PRSHLSTAGRD1000, RHD4CZ7C032RD1100, RHD4CZ5C051ST7500 | -188d |
|  | 6372 | **RHD4-02-002-C032-(RD)-Bituminous base course Two Layers, including (MC1)&(RC2)** |  | 2027-03-15 | 2027-09-05 |  |  |
| RHD4CZ7C032RD3100 |  | Supply, lay and Asphaltic base course including Prime Coat (MC1) for 1st Layer - (RD-C-3/2)-Z7-C032-RD | 4d | 2027-03-15 | 2027-03-18 | RHD4PRSHLDOSRD1100, RHD4ENMSASPH2000, RHD4ENMSASPH2010, RHD4PRSHLSTAGRD1100, RHD4CZ7C032RD2100 | -188d |
| RHD4CZ7C032RD3200 |  | Supply, lay and Asphaltic base course including Tack Coat (RC2) for 2nd Layer - (RD-C-3/2)-Z7-C032-RD | 4d | 2027-09-01 | 2027-09-05 | RHD4PRSHLDOSRD1100, RHD4PRSHLSTAGRD1100, RHD4CZ7C032CCTV4200 | -175d |
|  | 6374 | **RHD4-02-002-C032-(RD)-Precast Concrete Curb** |  | 2027-09-06 | 2027-09-13 |  |  |
| RHD4CZ7C032RD5100 |  | Supply and installation Precast Concrete Kerb for Roads - (RD-C-3/2)-Z7-C032-RD | 7d | 2027-09-06 | 2027-09-13 | RHD4PRSHLDOSRD1200, RHD4ENMSRD2000, RHD4ENMSRD2010, RHD4PRSHLSTAGRD1200, RHD4CZ7C032RD3200 | -175d |
|  | 6377 | **RHD4-02-002-C032-(RD)-Traffic Signage** |  | 2027-09-14 | 2027-09-20 |  |  |
| RHD4CZ7C032RD8100 |  | Installation of Traffic Signage for Road Network - (RD-C-3/2)-Z7-C032-RD | 6d | 2027-09-14 | 2027-09-20 | RHD4PRSHLDOSRD1600, RHD4PRSHLSTAGRD1600, RHD4CZ7C032RD5100 | -175d |
|  | 6375 | **RHD4-02-002-C032-(RD)-Precast Interlocking Block Pavers** |  |  |  |  |  |
|  | 6373 | **RHD4-02-002-C032-(RD)-Bituminous concrete wearing course including tack coat (RC2)** |  | 2027-09-14 | 2027-09-15 |  |  |
| RHD4CZ7C032RD4100 |  | Supply, lay and compaction Asphaltic wearing course including tack Coat (RC2)for Road Network - (RD-C-3/2)-Z7-C032-RD | 2d | 2027-09-14 | 2027-09-15 | RHD4CZ7C032RD5100 | -175d |
|  | 6376 | **RHD4-02-002-C032-(RD)-Pavement Marking** |  | 2027-09-16 | 2027-09-20 |  |  |
| RHD4CZ7C032RD7100 |  | Pavement Markings for Road Network - (RD-C-3/2)-Z7-C032-RD | 4d | 2027-09-16 | 2027-09-20 | RHD4PRSHLDOSRD1500, RHD4PRSHLSTAGRD1500, RHD4CZ7C032RD4100 | -175d |
|  | 6194 | **RHD4-02-002-Z7-C032-Storm Network - ST** |  |  |  |  |  |
|  | 6213 | **RHD4-02-002-C032-(ST)-MH Works - 2000 mm diameter** |  |  |  |  |  |
|  | 6212 | **RHD4-02-002-C032-(ST)-MH Works - 1500 mm diameter** |  |  |  |  |  |
|  | 6211 | **RHD4-02-002-C032-(ST)-MH Works - 1200 mm diameter** |  |  |  |  |  |
|  | 6208 | **RHD4-02-002-C032-(ST)-GRP Pipes - 1800 mm diameter** |  |  |  |  |  |
|  | 6207 | **RHD4-02-002-C032-(ST)-GRP Pipes - 1600 mm diameter** |  |  |  |  |  |
|  | 6206 | **RHD4-02-002-C032-(ST)-GRP Pipes - 1500 mm diameter** |  |  |  |  |  |
|  | 6200 | **RHD4-02-002-C032-(ST)-GRP Pipes - 900 mm diameter** |  |  |  |  |  |
|  | 6197 | **RHD4-02-002-C032-(ST)-GRP Pipes - 600 mm diameter** |  |  |  |  |  |
|  | 6196 | **RHD4-02-002-C032-(ST)-GRP Pipes - 500 mm diameter** |  |  |  |  |  |
|  | 6195 | **RHD4-02-002-C032-(ST)-GRP Pipes - 400 mm diameter** |  |  |  |  |  |
|  | 6209 | **RHD4-02-002-C032-(ST)-UPVC Pipes - 300 mm diameter** |  |  |  |  |  |
|  | 6217 | **RHD4-02-002-C032-(ST)-Concrete Encasement** |  |  |  |  |  |
|  | 6218 | **RHD4-02-002-Z7-C032-Catch Basin - ST** |  |  |  |  |  |
|  | 6219 | **RHD4-02-002-C032-(ST)-Single Catch Basin Works** |  |  |  |  |  |
|  | 6280 | **RHD4-02-002-Z7-C032-Potable Network - PT** |  | 2027-05-03 | 2027-06-09 |  |  |
|  | 6283 | **RHD4-02-002-C032-(PT)-HDPE Pipes - 200 mm diameter** |  | 2027-05-03 | 2027-05-24 |  |  |
| RHD4CZ7C032PT1102 |  | Excavation works for HDPE Pipline 200 mm - (RD-C-3/2)-Z7-C032-PT | 2d | 2027-05-03 | 2027-05-04 | RHD4ENSDZ7APPPT130, RHD4ENMSPT2000, RHD4CZ7C032RW3000, RHD4CZ7A012ST1106, RHD4CZ7A012SW1500, RHD4ENMSEW2000, RHD4ENMSEW2010, RHD4ENSDZ7APPEW100 SS, RHD4ENSDZ8APPEW100 SS | -87d |
| RHD4CZ7C032PT1202 |  | Bedding works for HDPE Pipline 200 mm - (RD-C-3/2)-Z7-C032-PT | 2d | 2027-05-05 | 2027-05-06 | RHD4CZ7C032PT1102 | -75d |
| RHD4CZ7C032PT1302 |  | Installing for HDPE Pipline 200 mm - (RD-C-3/2)-Z7-C032-PT | 2d | 2027-05-08 | 2027-05-09 | RHD4PRSHLDOSPT1000, RHD4PRSHLSTAGPT1000, RHD4CZ7C032PT1202 | -75d |
| RHD4CZ7C032PT1402 |  | Primary Test for HDPE Pipline 200 mm - (RD-C-3/2)-Z7-C032-PT | 2d | 2027-05-20 | 2027-05-22 | RHD4CZ7C032PT5100, RHD4CZ7C032PT1302 | -77d |
| RHD4CZ7C032PT1502 |  | Backfilling and warning tape works for HDPE Pipline 200 mm - (RD-C-3/2)-Z7-C032-PT | 2d | 2027-05-23 | 2027-05-24 | RHD4CZ7C032PT1402 | -77d |
|  | 6282 | **RHD4-02-002-C032-(PT)-HDPE Pipes - 160 mm diameter** |  | 2027-05-05 | 2027-05-24 |  |  |
| RHD4CZ7C032PT1101 |  | Excavation works for HDPE Pipline 160 mm - (RD-C-3/2)-Z7-C032-PT | 2d | 2027-05-05 | 2027-05-06 | RHD4ENSDZ7APPPT130, RHD4ENMSPT2000, RHD4CZ7C032PT1102 | -87d |
| RHD4CZ7C032PT1201 |  | Bedding works for HDPE Pipline 160 mm - (RD-C-3/2)-Z7-C032-PT | 2d | 2027-05-08 | 2027-05-09 | RHD4CZ7C032PT1101 | -87d |
| RHD4CZ7C032PT1301 |  | Installing for HDPE Pipline 160 mm - (RD-C-3/2)-Z7-C032-PT | 3d | 2027-05-10 | 2027-05-12 | RHD4PRSHLDOSPT1000, RHD4PRSHLSTAGPT1000, RHD4CZ7C032PT1201 | -87d |
| RHD4CZ7C032PT1401 |  | Primary Test for HDPE Pipline 160 mm - (RD-C-3/2)-Z7-C032-PT | 2d | 2027-05-20 | 2027-05-22 | RHD4CZ7C032PT1301, RHD4CZ7C032PT5100 | -77d |
| RHD4CZ7C032PT1501 |  | Backfilling and warning tape works for HDPE Pipline 160 mm - (RD-C-3/2)-Z7-C032-PT | 2d | 2027-05-23 | 2027-05-24 | RHD4CZ7C032PT1401 | -77d |
|  | 6286 | **RHD4-02-002-C032-(PT)-Gate Valves (Direct Buried)** |  | 2027-05-11 | 2027-05-26 |  |  |
| RHD4CZ7C032PT3100 |  | Installation for Direct Buried Gate Valves - (RD-C-3/2)-Z7-C032-PT | 2d | 2027-05-11 | 2027-05-12 | RHD4PRSHLDOSPT1200, RHD4PRSHLSTAGPT1200, RHD4CZ7C032PT1302 FF, RHD4CZ7C032PT1301 FF, RHD4CZ7C032PT1302 SS, RHD4CZ7C032PT1301 SS | -71d |
| RHD4CZ7C032PT3200 |  | Stem and Service box for Direct Buried Gate Valves - (RD-C-3/2)-Z7-C032-PT | 2d | 2027-05-25 | 2027-05-26 | RHD4PRSHLDOSPT1300, RHD4PRSHLSTAGPT1300, RHD4CZ7C032PT3100, RHD4CZ7C032PT1502, RHD4CZ7C032PT1501 | -77d |
|  | 6289 | **RHD4-02-002-C032-(PT)-Wash out Valve Chambers** |  | 2027-05-13 | 2027-05-26 |  |  |
| RHD4CZ7C032PT2101 |  | Excavation and Bedding for Wash out Valve Chambers for Potable Water Network - (RD-C-3/2)-Z7-C032-PT | 2d | 2027-05-13 | 2027-05-19 | RHD4ENSDZ7APPPT130, RHD4CZ7C032PT1301 | -87d |
| RHD4CZ7C032PT2201 |  | PC works for Wash out Valve Chambers for Potable Water Network - (RD-C-3/2)-Z7-C032-PT | 2d | 2027-05-20 | 2027-05-22 | RHD4CZ7C032PT2101 | -87d |
| RHD4CZ7C032PT2301 |  | Installation for Wash out Valve Chambers for Potable Water Network - (RD-C-3/2)-Z7-C032-PT | 2d | 2027-05-23 | 2027-05-24 | RHD4PRSHLDOSPT1100, RHD4PRSHLDOSPT1400, RHD4PRSHLSTAGPT1100, RHD4PRSHLSTAGPT1400, RHD4CZ7C032PT2201 | -87d |
| RHD4CZ7C032PT2401 |  | Backfilling works for Wash out Valve Chambers for Potable Water Network - (RD-C-3/2)-Z7-C032-PT | 2d | 2027-05-25 | 2027-05-26 | RHD4CZ7C032PT2301 | -87d |
|  | 6290 | **RHD4-02-002-C032-(PT)-Wash out Valves** |  | 2027-05-25 | 2027-05-29 |  |  |
| RHD4CZ7C032PT3102 |  | Installation for Wash out Valves for Potable Water Network - (RD-C-3/2)-Z7-C032-PT | 2d | 2027-05-25 | 2027-05-26 | RHD4PRSHLDOSPT1200, RHD4PRSHLSTAGPT1200, RHD4CZ7C032PT2301 | -87d |
| RHD4CZ7C032PT3202 |  | Stem and Service box for Wash out Valves for Potable Water Network - (RD-C-3/2)-Z7-C032-PT | 2d | 2027-05-27 | 2027-05-29 | RHD4PRSHLDOSPT1300, RHD4PRSHLSTAGPT1300, RHD4CZ7C032PT3102, RHD4CZ7C032PT2401 | -87d |
|  | 6293 | **RHD4-02-002-C032-(PT)-Fire Hydrant** |  | 2027-05-30 | 2027-06-09 |  |  |
| RHD4CZ7C032PT4100 |  | Excavation and Bedding and Pipe Installation for Fire Hydrant - (RD-C-3/2)-Z7-C032-PT | 2d | 2027-05-30 | 2027-05-31 | RHD4ENSDZ7APPPT130, RHD4CZ7C032PT3202 | -87d |
| RHD4CZ7C032PT4200 |  | Valve Installation for Fire Hydrant - (RD-C-3/2)-Z7-C032-PT | 2d | 2027-06-01 | 2027-06-02 | RHD4CZ7C032PT4100 | -87d |
| RHD4CZ7C032PT4300 |  | Stem for Fire Hydrant - (RD-C-3/2)-Z7-C032-PT | 2d | 2027-06-03 | 2027-06-05 | RHD4CZ7C032PT4200 | -87d |
| RHD4CZ7C032PT4400 |  | Fire Installation for Fire Hydrant - (RD-C-3/2)-Z7-C032-PT | 2d | 2027-06-06 | 2027-06-07 | RHD4PRSHLDOSPT1500, RHD4PRSHLSTAGPT1500, RHD4CZ7C032PT4300, RHD4CZ7C032PT2401 | -87d |
| RHD4CZ7C032PT4500 |  | Protection Barriers for Fire Hydrant - (RD-C-3/2)-Z7-C032-PT | 2d | 2027-06-08 | 2027-06-09 | RHD4CZ7C032PT4400, RHD4CZ7C032PT3200 | -87d |
|  | 6294 | **RHD4-02-002-C032-(PT)-Concrete Encasement** |  | 2027-05-10 | 2027-05-19 |  |  |

| ID | WBS | Task | Duration | Start | Finish | Predecessors | Total float |
| --- | --- | --- | --- | --- | --- | --- | --- |
| RHD4CZ7C032PT5100 |  | Pipe Encasement for Potable Pipelines - (RD-C-3/2)-Z7-C032-PT | 5d | 2027-05-10 | 2027-05-19 | RHD4CZ7C032PT1302 FF, RHD4CZ7C032PT1301 FF, RHD4CZ7C032PT1302 SS, RHD4CZ7C032PT1301 SS, RHD4CZ7C032PT1202, RHD4CZ7C032PT1201 | -77d |
|  | 1755 | **RHD4-02-002-Z7-C032-Irrigation Network - IRR** |  | 2027-05-09 | 2027-06-05 |  |  |
|  | 1770 | **RHD4-02-002-C032-(IRR)-Air Valves** |  | 2027-05-20 | 2027-06-02 |  |  |
| RHD4CZ7C032IRR3103 |  | Installation for Air Valves for Irrigation Network - (RD-C-3/2)-Z7-C032-IRR | 2d | 2027-05-20 | 2027-05-22 | RHD4CZ7C032IRR2302 | -76d |
| RHD4CZ7C032IRR3203 |  | Stem and Service box for Air Valves for Irrigation Network - (RD-C-3/2)-Z7-C032-IRR | 2d | 2027-06-01 | 2027-06-02 | RHD4CZ7C032IRR3103, RHD4CZ7C032IRR2402 | -84d |
|  | 6107 | **RHD4-02-002-C032-(IRR)-HDPE Pipes - 160 mm diameter** |  | 2027-05-09 | 2027-06-02 |  |  |
| RHD4CZ7C032IRR1100 |  | Excavation works for HDPE Pipline 160 mm - (RD-C-3/2)-Z7-C032-IRR | 4d | 2027-05-09 | 2027-05-12 | RHD4CZ7C032PT1301 FF | -86d |
| RHD4CZ7C032IRR1200 |  | Bedding works for HDPE Pipline 160 mm - (RD-C-3/2)-Z7-C032-IRR | 4d | 2027-05-13 | 2027-05-22 | RHD4CZ7C032IRR1100 | -86d |
| RHD4CZ7C032IRR1300 |  | Installing for HDPE Pipline 160 mm - (RD-C-3/2)-Z7-C032-IRR | 4d | 2027-05-23 | 2027-05-26 | RHD4CZ7C032IRR1200 | -86d |
| RHD4CZ7C032IRR1400 |  | Primary Test for HDPE Pipline 160 mm - (RD-C-3/2)-Z7-C032-IRR | 2d | 2027-05-27 | 2027-05-29 | RHD4CZ7C032IRR1300 | -86d |
| RHD4CZ7C032IRR1500 |  | Backfilling and warning tape works for HDPE Pipline 160 mm - (RD-C-3/2)-Z7-C032-IRR | 4d | 2027-05-30 | 2027-06-02 | RHD4CZ7C032IRR1400 | -86d |
|  | 6115 | **RHD4-02-002-C032-(IRR)-Gate Valves (Direct Buried)** |  | 2027-05-25 | 2027-06-05 |  |  |
| RHD4CZ7C032IRR3100 |  | Installation for Direct Buried Gate Valves - (RD-C-3/2)-Z7-C032-IRR | 2d | 2027-05-25 | 2027-05-26 | RHD4CZ7C032IRR1300 SS, RHD4CZ7C032IRR1300 FF | -80d |
| RHD4CZ7C032IRR3200 |  | Stem and Service box for Direct Buried Gate Valves - (RD-C-3/2)-Z7-C032-IRR | 2d | 2027-06-03 | 2027-06-05 | RHD4CZ7C032IRR3100, RHD4CZ7C032IRR1500 | -86d |
|  | 6685 | **RHD4-02-002-C032-(IRR)-Wash out Chamber** |  | 2027-05-09 | 2027-05-22 |  |  |
| RHD4CZ7C032IRR2101 |  | Excavation and Bedding for Wash out Chamber for Irrigation Network - (RD-C-3/2)-Z7-C032-IRR | 2d | 2027-05-09 | 2027-05-10 | RHD4CZ7C032IRR1100 SS | -83d |
| RHD4CZ7C032IRR2201 |  | PC works for Wash out Chamber for Irrigation Network - (RD-C-3/2)-Z7-C032-IRR | 2d | 2027-05-11 | 2027-05-12 | RHD4CZ7C032IRR2101 | -83d |
| RHD4CZ7C032IRR2301 |  | Installation for Wash out Chamber for Irrigation Network - (RD-C-3/2)-Z7-C032-IRR | 2d | 2027-05-13 | 2027-05-19 | RHD4CZ7C032IRR2201 | -83d |
| RHD4CZ7C032IRR2401 |  | Backfilling works for Wash out Chamber for Irrigation Network - (RD-C-3/2)-Z7-C032-IRR | 2d | 2027-05-20 | 2027-05-22 | RHD4CZ7C032IRR2301 | -83d |
|  | 6686 | **RHD4-02-002-C032-(IRR)-Wash out Valves** |  | 2027-05-20 | 2027-05-24 |  |  |
| RHD4CZ7C032IRR3102 |  | Installation for Wash out Valve for Irrigation Network - (RD-C-3/2)-Z7-C032-IRR | 2d | 2027-05-20 | 2027-05-22 | RHD4CZ7C032IRR2301 | -83d |
| RHD4CZ7C032IRR3202 |  | Stem and Service box for Wash out Valve for Irrigation Network - (RD-C-3/2)-Z7-C032-IRR | 2d | 2027-05-23 | 2027-05-24 | RHD4CZ7C032IRR3102, RHD4CZ7C032IRR2401 | -83d |
|  | 1769 | **RHD4-02-002-C032-(IRR)-Air Valve Chamber** |  | 2027-05-09 | 2027-05-31 |  |  |
| RHD4CZ7C032IRR2102 |  | Excavation and Bedding for Valve Chamber for Irrigation Network - (RD-C-3/2)-Z7-C032-IRR | 2d | 2027-05-09 | 2027-05-10 | RHD4CZ7C032IRR2101 SS | -76d |
| RHD4CZ7C032IRR2202 |  | PC works for Valve Chamber for Irrigation Network - (RD-C-3/2)-Z7-C032-IRR | 2d | 2027-05-11 | 2027-05-12 | RHD4CZ7C032IRR2102 | -76d |
| RHD4CZ7C032IRR2302 |  | Installation for Valve Chamber for Irrigation Network - (RD-C-3/2)-Z7-C032-IRR | 2d | 2027-05-13 | 2027-05-19 | RHD4CZ7C032IRR2202 | -76d |
| RHD4CZ7C032IRR2402 |  | Backfilling works for Valve Chamber for Irrigation Network - (RD-C-3/2)-Z7-C032-IRR | 2d | 2027-05-30 | 2027-05-31 | RHD4CZ7C032IRR2302, RHD4CZ7C032IRR5100 | -84d |
|  | 1771 | **RHD4-02-002-C032-(IRR)-Concrete Encasement** |  | 2027-05-27 | 2027-05-29 |  |  |
| RHD4CZ7C032IRR5100 |  | Pipe Encasement for Irrigation Pipelines - (RD-C-3/2)-Z7-C032-IRR | 2d | 2027-05-27 | 2027-05-29 | RHD4CZ7C032IRR1300 | -84d |
|  | 6329 | **RHD4-02-002-Z7-C032-Medium Voltage Network - MV** |  | 2027-03-20 | 2027-08-09 |  |  |
|  | 6330 | **RHD4-02-002-C032-(MV)-Medium Voltage cable trench** |  | 2027-07-06 | 2027-08-09 |  |  |
| RHD4CZ7C032MV1100 |  | Excavation for Medium Voltage Trench - (RD-C-3/2)-Z7-C032-MV | 6d | 2027-07-06 | 2027-07-13 | RHD4ENSDZ7APPMV150, RHD4CZ7C032RD3100, RHD4CZ8A011MV1100 | -142.02d |
| RHD4CZ7C032MV1200 |  | Trench Backfilling for Medium Voltage Network - (RD-C-3/2)-Z7-C032-MV | 6d | 2027-08-02 | 2027-08-09 | RHD4CZ7C032MV3300 | -142.02d |
|  | 6331 | **RHD4-02-002-C032-(MV)-Medium Voltage duct banks** |  | 2027-03-20 | 2027-04-22 |  |  |
| RHD4CZ7C032MV2100 |  | Excavation of Duct Banks for Medium Voltage Network - (RD-C-3/2)-Z7-C032-MV | 8d | 2027-03-20 | 2027-03-28 | RHD4ENSDZ7APPMV150, RHD4CZ7C032RD3100 | -179d |
| RHD4CZ7C032MV2200 |  | Installation of Duct Banks for Medium Voltage Network - (RD-C-3/2)-Z7-C032-MV | 11d | 2027-03-29 | 2027-04-10 | RHD4PRSHLDOSMV1000, RHD4PRSHLSTAGMV1000, RHD4CZ7C032MV2100 | -179d |
| RHD4CZ7C032MV2300 |  | Pouring of Duct Banks for Medium Voltage Network - (RD-C-3/2)-Z7-C032-MV | 8d | 2027-04-11 | 2027-04-19 | RHD4CZ7C032MV2200 | -179d |
| RHD4CZ7C032MV2400 |  | Backfilling of Duct Banks for Medium Voltage Network - (RD-C-3/2)-Z7-C032-MV | 3d | 2027-04-20 | 2027-04-22 | RHD4CZ7C032MV2300 | -179d |
|  | 6332 | **RHD4-02-002-C032-(MV)-Medium Voltage cables 3Cx 500 mm²** |  | 2027-07-13 | 2027-08-02 |  |  |
| RHD4CZ7C032MV3100 |  | Installation of Medium Voltage Cables 3Cx 500 mm² - (RD-C-3/2)-Z7-C032-MV | 7d | 2027-07-13 | 2027-07-21 | RHD4PRSHLDOSMV1100, RHD4ENMSMV2000, RHD4ENMSMV2010, RHD4PRSHLSTAGMV1100, RHD4CZ7C032MV1100 | -142.02d |
| RHD4CZ7C032MV3200 |  | Joints Installation of Medium Voltage Cables 3Cx 500 mm² - (RD-C-3/2)-Z7-C032-MV | 3d | 2027-07-21 | 2027-07-25 | RHD4PRSHLDOSMV1300, RHD4PRSHLSTAGMV1300, RHD4CZ7C032MV3100, RHD4CZ5A014IRR1503 | -142.02d |
| RHD4CZ7C032MV3300 |  | Testing of Medium Voltage Cables 3Cx 500 mm² - (RD-C-3/2)-Z7-C032-MV | 7d | 2027-07-25 | 2027-08-02 | RHD4CZ7C032MV3200 | -142.02d |
|  | 6336 | **RHD4-02-002-Z7-C032-Low Voltage Network - LV** |  | 2027-03-07 | 2027-04-25 |  |  |
|  | 6337 | **RHD4-02-002-C032-(LV)-Low Voltage duct banks** |  |  |  |  |  |
|  | 6338 | **RHD4-02-002-C032-(LV)-Low Voltage Drawpit** |  | 2027-03-07 | 2027-03-14 |  |  |
| RHD4CZ7C032LV5100 |  | Excavation of Drawpit size 900x900x1000mm for Low Voltage Network - (RD-C-3/2)-Z7-C032-LV | 2d | 2027-03-07 | 2027-03-08 | RHD4ENSDZ7APPLV160, RHD4CZ5C051PT1500 SS | -152d |
| RHD4CZ7C032LV5200 |  | Installation of Drawpit size 900x900x1000mm for Low Voltage Network - (RD-C-3/2)-Z7-C032-LV | 2d | 2027-03-13 | 2027-03-14 | RHD4PRSHLDOSLV1400, RHD4PRSHLSTAGLV1400, RHD4CZ7C032LV5100 | -152d |
|  | 6339 | **RHD4-02-002-C032-(LV)-Low Voltage cables** |  | 2027-03-15 | 2027-04-25 |  |  |
| RHD4CZ7C032LV3100 |  | Excavation for Low Voltage Cables for Low Voltage Network - (RD-C-3/2)-Z7-C032-LV | 3d | 2027-03-15 | 2027-03-17 | RHD4ENSDZ7APPLV160, RHD4CZ7C032LV5200 | -152d |
| RHD4CZ7C032LV3200 |  | Cable Laying of Low Voltage Cables for Low Voltage Network - (RD-C-3/2)-Z7-C032-LV | 2d | 2027-03-18 | 2027-03-20 | RHD4PRSHLDOSLV1100, RHD4ENMSLV2000, RHD4ENMSLV2010, RHD4PRSHLSTAGLV1100, RHD4CZ7C032LV3100 | -152d |
| RHD4CZ7C032LV3300 |  | Warning tape and Backfill for Low Voltage Cables for Low Voltage Network - (RD-C-3/2)-Z7-C032-LV | 2d | 2027-03-21 | 2027-03-22 | RHD4CZ7C032LV3200 | -152d |
| RHD4CZ7C032LV3400 |  | Testing of Low Voltage Cables for Low Voltage Network - (RD-C-3/2)-Z7-C032-LV | 2d | 2027-04-24 | 2027-04-25 | RHD4CZ7C032LV3300, RHD4CZ7C032MV2400 | -179d |
|  | 4259 | **RHD4-02-002-C032-(LV)-Low Voltage Distribution Pillars** |  |  |  |  |  |
|  | 6342 | **RHD4-02-002-Z7-C032-Street Lighting Network - SL** |  | 2027-02-18 | 2027-06-06 |  |  |
|  | 6343 | **RHD4-02-002-C032-(SL)-Street Lighting duct banks** |  | 2027-02-18 | 2027-03-13 |  |  |
| RHD4CZ7C032SL2100 |  | Excavation of Duct Banks for Street Lighting Network - (RD-C-3/2)-Z7-C032-SL | 4d | 2027-02-18 | 2027-02-23 | RHD4ENSDZ7APPSL170, RHD4CZ5C051SW3300 | -149d |
| RHD4CZ7C032SL2200 |  | Installation of Duct Banks for Street Lighting Network - (RD-C-3/2)-Z7-C032-SL | 5d | 2027-02-24 | 2027-03-01 | RHD4PRSHLDOSSL1000, RHD4PRSHLSTAGSL1000, RHD4CZ7C032SL2100 | -149d |
| RHD4CZ7C032SL2300 |  | Pouring of Duct Banks for Street Lighting Network - (RD-C-3/2)-Z7-C032-SL | 4d | 2027-03-02 | 2027-03-06 | RHD4CZ7C032SL2200 | -149d |
| RHD4CZ7C032SL2400 |  | Backfilling of Duct Banks for Street Lighting Network - (RD-C-3/2)-Z7-C032-SL | 3d | 2027-03-07 | 2027-03-13 | RHD4CZ7C032SL2300 | -149d |
|  | 6344 | **RHD4-02-002-C032-(SL)-Street Lighting Drawpit** |  | 2027-05-03 | 2027-05-06 |  |  |
| RHD4CZ7C032SL5100 |  | Excavation of Drawpit size 600x600x900mm for Street Lighting Network - (RD-C-3/2)-Z7-C032-SL | 2d | 2027-05-03 | 2027-05-04 | RHD4ENSDZ7APPSL170, RHD4CZ7C032SL2300, RHD4CZ7C032LV3400, RHD4CZ9C071ST1505, RHD4CZ7C013MV3300 | -185d |
| RHD4CZ7C032SL5200 |  | Installation of Drawpit size 600x600x900mm for Street Lighting Network - (RD-C-3/2)-Z7-C032-SL | 2d | 2027-05-05 | 2027-05-06 | RHD4PRSHLDOSSL1400, RHD4PRSHLSTAGSL1400, RHD4CZ7C032SL5100 | -185d |
|  | 6345 | **RHD4-02-002-C032-(SL)-Street Lighting cables** |  | 2027-05-08 | 2027-05-22 |  |  |
| RHD4CZ7C032SL3100 |  | Excavation for Street Lighting Cables for Street Lighting Network - (RD-C-3/2)-Z7-C032-SL | 3d | 2027-05-08 | 2027-05-10 | RHD4ENSDZ7APPSL170, RHD4CZ7C032SL5200 | -185d |
| RHD4CZ7C032SL3200 |  | Cable Laying of Street Lighting Cables for Street Lighting Network - (RD-C-3/2)-Z7-C032-SL | 2d | 2027-05-11 | 2027-05-12 | RHD4PRSHLDOSSL1100, RHD4ENMSSL2000, RHD4ENMSSL2010, RHD4PRSHLSTAGSL1100, RHD4CZ7C032SL3100 | -185d |
| RHD4CZ7C032SL3300 |  | Warning tape and Backfill for Street Lighting Cables for Street Lighting Network - (RD-C-3/2)-Z7-C032-SL | 2d | 2027-05-13 | 2027-05-19 | RHD4CZ7C032SL3200 | -185d |
| RHD4CZ7C032SL3400 |  | Testing of Street Lighting Cables for Street Lighting Network - (RD-C-3/2)-Z7-C032-SL | 2d | 2027-05-20 | 2027-05-22 | RHD4CZ7C032SL3300 | -185d |
|  | 6346 | **RHD4-02-002-C032-(SL)-Street Lighting Poles** |  | 2027-05-23 | 2027-06-06 |  |  |
| RHD4CZ7C032SL1100 |  | Excavation for RC Base for Lighting Poles for Street Lighting Network - (RD-C-3/2)-Z7-C032-SL | 2d | 2027-05-23 | 2027-05-24 | RHD4ENSDZ7APPSL170, RHD4CZ7C032SL3400, RHD4CZ9C071ST6100, RHD4CZ1L101ST7500 | -185d |
| RHD4CZ7C032SL1200 |  | Installation for RC Base for Lighting Poles for Street Lighting Network - (RD-C-3/2)-Z7-C032-SL | 2d | 2027-05-25 | 2027-05-26 | RHD4CZ7C032SL1100 | -185d |

| ID | WBS | Task | Duration | Start | Finish | Predecessors | Total float |
| --- | --- | --- | --- | --- | --- | --- | --- |
| RHD4CZ7C032SL1300 |  | Backfill for RC Base for Lighting Poles for Street Lighting Network - (RD-C-3/2)-Z7-C032-SL | 2d | 2027-05-27 | 2027-05-29 | RHD4CZ7C032SL1200 | -185d |
| RHD4CZ7C032SL1400 |  | Installation for Lighting Poles for Street Lighting Network - (RD-C-3/2)-Z7-C032-SL | 2d | 2027-05-30 | 2027-05-31 | RHD4PRSHLDOSSL1200, RHD4ENMSSL2000, RHD4ENMSSL2010, RHD4PRSHLSTAGSL1200, RHD4CZ7C032SL1300 | -185d |
| RHD4CZ7C032SL1500 |  | Luminaire Installation for Lighting Poles for Street Lighting Network - (RD-C-3/2)-Z7-C032-SL | 3d | 2027-06-03 | 2027-06-06 | RHD4PRSHLDOSSL1300, RHD4PRSHLSTAGSL1300, RHD4CZ7C032SL1400, RHD4CZ7C032SL6100 | -185d |
|  | 6348 | **RHD4-02-002-C032-(SL)-Street Lighting Earthing System** |  | 2027-06-01 | 2027-06-02 |  |  |
| RHD4CZ7C032SL6100 |  | Installation of Earthing for Lighting Poles and Fedder Pillers for Street Lighting Network - (RD-C-3/2)-Z7-C032-SL | 2d | 2027-06-01 | 2027-06-02 | RHD4ENMSER2000, RHD4ENMSER2010, RHD4CZ7C032SL1400 | -185d |
|  | 6354 | **RHD4-02-002-Z7-C032-Telecommunications Network - TC** |  | 2027-02-14 | 2027-06-29 |  |  |
|  | 6355 | **RHD4-02-002-C032-(TC)-Telecommunications Ducts** |  | 2027-06-07 | 2027-06-29 |  |  |
| RHD4CZ7C032TC2100 |  | Excavation of HDPE Ducts for Telecom Network - (RD-C-3/2)-Z7-C032-TC | 6d | 2027-06-07 | 2027-06-13 | RHD4ENSDZ7APPTC190, RHD4CZ7C032SL1500 | -185d |
| RHD4CZ7C032TC2200 |  | Installation of HDPE Ducts for Telecom Network - (RD-C-3/2)-Z7-C032-TC | 8d | 2027-06-14 | 2027-06-22 | RHD4PRSHLDOSTC1000, RHD4PRSHLSTAGTC1000, RHD4CZ7C032TC2100 | -185d |
| RHD4CZ7C032TC2400 |  | Backfilling of HDPE Ducts for Telecom Network - (RD-C-3/2)-Z7-C032-TC | 6d | 2027-06-23 | 2027-06-29 | RHD4CZ7C032TC2200, RHD4CZ7C032TC5200 | -185d |
|  | 6356 | **RHD4-02-002-C032-(TC)-Telecommunications Manholes** |  | 2027-06-14 | 2027-06-20 |  |  |
| RHD4CZ7C032TC5100 |  | Excavation for Manholes for Telecom Network - (RD-C-3/2)-Z7-C032-TC | 3d | 2027-06-14 | 2027-06-16 | RHD4ENSDZ7APPTC190, RHD4CZ7C032TC2100 | -183d |
| RHD4CZ7C032TC5200 |  | Installation of Manholes for Telecom Network - (RD-C-3/2)-Z7-C032-TC | 3d | 2027-06-17 | 2027-06-20 | RHD4PRSHLDOSTC1200, RHD4PRSHLSTAGTC1200, RHD4CZ7C032TC5100, RHD4CZ7C032TC2200 SS | -183d |
|  | 6357 | **RHD4-02-002-C032-(TC)-Telecomminications Road Crossings** |  | 2027-02-14 | 2027-02-25 |  |  |
| RHD4CZ7C032TC3100 |  | Excavation for Road Crossings for Telecom Network - (RD-C-3/2)-Z7-C032-TC | 2d | 2027-02-14 | 2027-02-15 | RHD4ENSDZ7APPTC190, RHD4PRSHLDOSICT1000 | -188d |
| RHD4CZ7C032TC3200 |  | Installation of Road Crossings for Telecom Network - (RD-C-3/2)-Z7-C032-TC | 3d | 2027-02-16 | 2027-02-18 | RHD4PRSHLDOSTC1100, RHD4PRSHLSTAGTC1100, RHD4CZ7C032TC3100, RHD4CZ5L08ST3500, RHD4CZ5L016ST1500 | -188d |
| RHD4CZ7C032TC3300 |  | Pouring of Road Crossings for Telecom Network - (RD-C-3/2)-Z7-C032-TC | 3d | 2027-02-20 | 2027-02-23 | RHD4CZ7C032TC3200 | -188d |
| RHD4CZ7C032TC3400 |  | Backfilling of Road Crossings for Telecom Network - (RD-C-3/2)-Z7-C032-TC | 2d | 2027-02-24 | 2027-02-25 | RHD4CZ7C032TC3300 | -188d |
|  | 6358 | **RHD4-02-002-Z7-C032-Information and Communication Technologies - ICT** |  | 2027-02-14 | 2027-07-28 |  |  |
|  | 6359 | **RHD4-02-002-C032-(ICT)-Information and Communication Technologies Ducts** |  | 2027-06-30 | 2027-07-28 |  |  |
| RHD4CZ7C032ICT2100 |  | Excavation of HDPE Ducts for ICT Network - (RD-C-3/2)-Z7-C032-ICT | 6d | 2027-06-30 | 2027-07-06 | RHD4ENSDZ7APPICT200, RHD4CZ7C032TC2400, RHD4CZ7C032MV2400 | -175d |
| RHD4CZ7C032ICT2200 |  | Installation of HDPE Ducts for ICT Network - (RD-C-3/2)-Z7-C032-ICT | 9d | 2027-07-07 | 2027-07-17 | RHD4PRSHLDOSICT1000, RHD4PRSHLSTAGICT1000, RHD4CZ7C032ICT2100 | -175d |
| RHD4CZ7C032ICT2400 |  | Backfilling of HDPE Ducts for ICT Network - (RD-C-3/2)-Z7-C032-ICT | 6d | 2027-07-22 | 2027-07-28 | RHD4CZ7C032ICT5200 | -175d |
|  | 6360 | **RHD4-02-002-C032-(ICT)-Information and Communication Technologies Manholes** |  | 2027-07-18 | 2027-07-21 |  |  |
| RHD4CZ7C032ICT5100 |  | Excavation for Manholes for ICT Network - (RD-C-3/2)-Z7-C032-ICT | 2d | 2027-07-18 | 2027-07-19 | RHD4ENSDZ7APPICT200, RHD4CZ7C032ICT2200 | -175d |
| RHD4CZ7C032ICT5200 |  | Installation of Manholes for ICT Network - (RD-C-3/2)-Z7-C032-ICT | 2d | 2027-07-20 | 2027-07-21 | RHD4PRSHLDOSICT1200, RHD4PRSHLSTAGICT1200, RHD4CZ7C032ICT5100 | -175d |
|  | 6361 | **RHD4-02-002-C032-(ICT)-Information and Communication Technologies Road Crossings** |  | 2027-02-14 | 2027-02-23 |  |  |
| RHD4CZ7C032ICT3100 |  | Excavation for Road Crossings for ICT Network - (RD-C-3/2)-Z7-C032-ICT | 2d | 2027-02-14 | 2027-02-15 | RHD4ENSDZ7APPICT200, RHD4PRSHLDOSICT1000 | -186d |
| RHD4CZ7C032ICT3200 |  | Installation of Road Crossings for ICT Network - (RD-C-3/2)-Z7-C032-ICT | 2d | 2027-02-16 | 2027-02-17 | RHD4PRSHLDOSICT1100, RHD4PRSHLSTAGICT1100, RHD4CZ7C032ICT3100 | -186d |
| RHD4CZ7C032ICT3300 |  | Pouring of Road Crossings for ICT Network - (RD-C-3/2)-Z7-C032-ICT | 2d | 2027-02-18 | 2027-02-20 | RHD4CZ7C032ICT3200 | -186d |
| RHD4CZ7C032ICT3400 |  | Backfilling of Road Crossings for ICT Network - (RD-C-3/2)-Z7-C032-ICT | 2d | 2027-02-21 | 2027-02-23 | RHD4CZ7C032ICT3300 | -186d |
|  | 6349 | **RHD4-02-002-Z7-C032-Landscape Network - LS** |  |  |  |  |  |
|  | 6350 | **RHD4-02-002-C032-(LS)-Landscape Lighting cables** |  |  |  |  |  |
|  | 6351 | **RHD4-02-002-C032-(LS)-Landscape Feeder Pillars** |  |  |  |  |  |
|  | 6352 | **RHD4-02-002-C032-(LS)-Landscape Bollard Poles** |  |  |  |  |  |
|  | 6353 | **RHD4-02-002-C032-(LS)-Landscape Feeder Pillars Earthing** |  |  |  |  |  |
|  | 6362 | **RHD4-02-002-Z7-C032-Security Network - CCTV** |  | 2027-07-29 | 2027-08-31 |  |  |
|  | 6363 | **RHD4-02-002-C032-(CCTV)-Civil Works** |  | 2027-07-29 | 2027-08-03 |  |  |
| RHD4CZ7C032CCTV2100 |  | Civil Works for Security Network - (RD-C-3/2)-Z7-C032-CCTV | 5d | 2027-07-29 | 2027-08-03 | RHD4CZ7C032ICT2400 | -175d |
|  | 6364 | **RHD4-02-002-C032-(CCTV)-CCTV Poles** |  | 2027-08-04 | 2027-08-15 |  |  |
| RHD4CZ7C032CCTV1100 |  | Excavation for RC Base for CCTV Poles for Security Network - (RD-C-3/2)-Z7-C032-CCTV | 2d | 2027-08-04 | 2027-08-05 | RHD4ENSDZ7APPCCTV210, RHD4CZ7C032CCTV2100 | -175d |
| RHD4CZ7C032CCTV1200 |  | Installation for RC Base for CCTV Poles for Security Network - (RD-C-3/2)-Z7-C032-CCTV | 2d | 2027-08-07 | 2027-08-08 | RHD4CZ7C032CCTV1100 | -175d |
| RHD4CZ7C032CCTV1300 |  | Backfill for RC Base for CCTV Poles for Security Network - (RD-C-3/2)-Z7-C032-CCTV | 2d | 2027-08-09 | 2027-08-10 | RHD4CZ7C032CCTV1200 | -175d |
| RHD4CZ7C032CCTV1400 |  | Installation for CCTV Poles for Security Network - (RD-C-3/2)-Z7-C032-CCTV | 2d | 2027-08-11 | 2027-08-12 | RHD4PRSHLDOSCCTV1000, RHD4PRSHLSTACCTV1000, RHD4CZ7C032CCTV1300 | -175d |
| RHD4CZ7C032CCTV1500 |  | Protection post Installation for CCTV Poles for Security Network - (RD-C-3/2)-Z7-C032-CCTV | 2d | 2027-08-14 | 2027-08-15 | RHD4CZ7C032CCTV1400 | -175d |
|  | 6365 | **RHD4-02-002-C032-(CCTV)-Camera** |  | 2027-08-16 | 2027-08-17 |  |  |
| RHD4CZ7C032CCTV3100 |  | Installation for Cameras for Security Network - (RD-C-3/2)-Z7-C032-CCTV | 2d | 2027-08-16 | 2027-08-17 | RHD4PRSHLDOSCCTV1100, RHD4PRSHLSTACCTV1100, RHD4CZ7C032CCTV1500 | -175d |
|  | 6366 | **RHD4-02-002-C032-(CCTV)-Power and Infrastructure** |  | 2027-08-28 | 2027-08-31 |  |  |
| RHD4CZ7C032CCTV4100 |  | Installation of Power outlet, UPS and midspan for PTZ Camerafor Cameras for Security Network - (RD-C-3/2)-Z7-C032-CCTV | 2d | 2027-08-28 | 2027-08-29 | RHD4PRSHLDOSCCTV1300, RHD4PRSHLSTACCTV1300, RHD4CZ7C032CCTV1400, RHD4CZ7C032CCTV6100 | -175d |
| RHD4CZ7C032CCTV4200 |  | Short Range Wireless PoP wireless Bridgefor CCTV Poles for Security Network - (RD-C-3/2)-Z7-C032-CCTV | 2d | 2027-08-30 | 2027-08-31 | RHD4CZ7C032CCTV4100 | -175d |
|  | 6368 | **RHD4-02-002-C032-(CCTV)-CCTV Panels and Components** |  | 2027-08-18 | 2027-08-26 |  |  |
| RHD4CZ7C032CCTV6100 |  | Installation for CCTV Panels for Security Network - (RD-C-3/2)-Z7-C032-CCTV | 8d | 2027-08-18 | 2027-08-26 | RHD4PRSHLDOSCCTV1200, RHD4PRSHLSTACCTV1200, RHD4PRLOLSTACCTV1001, RHD4CZ7C032CCTV3100 | -175d |
|  | 6379 | **RHD4-02-002-Z7-L03** |  | 2026-07-28 | 2027-12-29 |  |  |
|  | 6410 | **RHD4-02-002-Z7-L03-Crossings Sewage Network - SWCr** |  |  |  |  |  |
|  | 6420 | **RHD4-02-002-L03-(SWCr)-MH Works - 1200 mm diameter** |  |  |  |  |  |
|  | 6422 | **RHD4-02-002-L03-(SWCr)-MH Works - 1500 mm diameter** |  |  |  |  |  |
|  | 6423 | **RHD4-02-002-L03-(SWCr)-MH Works - 1500 mm diameter with Back drop** |  |  |  |  |  |
|  | 6415 | **RHD4-02-002-L03-(SWCr)-GRP Pipes - 700 mm diameter** |  |  |  |  |  |
|  | 6414 | **RHD4-02-002-L03-(SWCr)-GRP Pipes - 600 mm diameter** |  |  |  |  |  |
|  | 6412 | **RHD4-02-002-L03-(SWCr)-GRP Pipes - 400 mm diameter** |  |  |  |  |  |
|  | 6411 | **RHD4-02-002-L03-(SWCr)-GRP Pipes - 300 mm diameter** |  |  |  |  |  |
|  | 6417 | **RHD4-02-002-L03-(SWCr)-HDPE Pipes - 250 mm diameter** |  |  |  |  |  |
|  | 6416 | **RHD4-02-002-L03-(SWCr)-UPVC Pipes - 200 mm diameter** |  |  |  |  |  |
|  | 6424 | **RHD4-02-002-L03-(SWCr)-Wash out Chambers** |  |  |  |  |  |
|  | 6425 | **RHD4-02-002-L03-(SWCr)-Wash out Valves** |  |  |  |  |  |
|  | 6454 | **RHD4-02-002-Z7-L03-Crossings Potable Network - PTCr** |  |  |  |  |  |
|  | 6455 | **RHD4-02-002-L03-(PTCr)-HDPE Pipes - 110 mm diameter** |  |  |  |  |  |
|  | 6456 | **RHD4-02-002-L03-(PTCr)-HDPE Pipes - 160 mm diameter** |  |  |  |  |  |
|  | 6460 | **RHD4-02-002-L03-(PTCr)-Gate Valves (Direct Buried)** |  |  |  |  |  |
|  | 6465 | **RHD4-02-002-L03-(PTCr)-Air Valve Chambers** |  |  |  |  |  |

| ID | WBS | Task | Duration | Start | Finish | Predecessors | Complete | Total float |
| --- | --- | --- | --- | --- | --- | --- | --- | --- |
|  | 6466 | **RHD4-02-002-L03-(PTCr)-Air Valves** |  |  |  |  |  |  |
|  | 6467 | **RHD4-02-002-L03-(PTCr)-Fire Hydrant** |  |  |  |  |  |  |
|  | 6501 | **RHD4-02-002-Z7-L03-Crossings Irrigation Network - IRRC** |  |  |  |  |  |  |
|  | 6502 | **RHD4-02-002-L03-(IRRC)-HDPE Pipes - 160 mm diameter** |  |  |  |  |  |  |
|  | 6506 | **RHD4-02-002-L03-(IRRC)-HDPE Pipes - 315 mm diameter** |  |  |  |  |  |  |
|  | 6510 | **RHD4-02-002-L03-(IRRC)-Gate Valves (Direct Buried)** |  |  |  |  |  |  |
|  | 6511 | **RHD4-02-002-L03-(IRRC)-Butterfly Valve Chamber** |  |  |  |  |  |  |
|  | 6512 | **RHD4-02-002-L03-(IRRC)-Butterfly Valves** |  |  |  |  |  |  |
|  | 6513 | **RHD4-02-002-L03-(IRRC)-Wash out Chamber** |  |  |  |  |  |  |
|  | 6514 | **RHD4-02-002-L03-(IRRC)-Wash out Valves** |  |  |  |  |  |  |
|  | 6515 | **RHD4-02-002-L03-(IRRC)-Air Valve Chamber** |  |  |  |  |  |  |
|  | 6516 | **RHD4-02-002-L03-(IRRC)-Air Valves** |  |  |  |  |  |  |
|  | 6558 | **RHD4-02-002-Z7-L03-Road Works - RD** |  | 2026-07-28 | 2027-12-29 |  |  |  |
|  | 6559 | **RHD4-02-002-L03-(RD)-Subgrade** |  | 2026-07-28 | 2026-08-03 |  |  |  |
| RHD4CZ7L03RD1100 |  | Supply, lay and compaction subgrade compacted thickness 300 mm for Roads - (RD-L-3)-Z7-L03-RD(Completed) | 6d | 2026-07-28 A | 2026-08-03 A | RHD4ENSDZ7APPEW100, RHD4ENSDZ7APPRD220, RHD4CZ7L03RW3000, RHD4CZ7L03ST1508, RHD4CZ7L03TC3400, RHD4CZ7L03ICT3400 | 100% |  |
|  | 6560 | **RHD4-02-002-L03-(RD)-Aggregate Base Course** |  | 2027-02-24 | 2027-03-02 |  |  |  |
| RHD4CZ7L03RD2100 |  | Supply, lay and compaction Aggregate base course compacted thickness 300 mmfor Roads - (RD-L-3)-Z7-L03-RD | 6d | 2027-02-24 | 2027-03-02 | RHD4PRSHLDOSRD1000, RHD4PRSHLSTAGRD1000, RHD4CZ7L03RD1100 |  | -167d |
|  | 6561 | **RHD4-02-002-L03-(RD)-Bituminous base course Two Layers, including (MC1)&(RC2)** |  | 2027-03-03 | 2027-11-21 |  |  |  |
| RHD4CZ7L03RD3100 |  | Supply, lay and Asphaltic base course including Prime Coat (MC1) for 1st Layer - (RD-L-3)-Z7-L03-RD | 2d | 2027-03-03 | 2027-03-04 | RHD4PRSHLDOSRD1100, RHD4ENMSASPH2000, RHD4ENMSASPH2010, RHD4PRSHLSTAGRD1100, RHD4CZ7L03RD2100 |  | -167d |
| RHD4CZ7L03RD3200 |  | Supply, lay and Asphaltic base course including Tack Coat (RC2) for 2nd Layer - (RD-L-3)-Z7-L03-RD | 2d | 2027-11-20 | 2027-11-21 | RHD4PRSHLDOSRD1100, RHD4PRSHLSTAGRD1100, RHD4CZ7L03CCTV6100 |  | -155d |
|  | 6563 | **RHD4-02-002-L03-(RD)-Precast Concrete Curb** |  | 2027-11-22 | 2027-12-01 |  |  |  |
| RHD4CZ7L03RD5100 |  | Supply and installation Precast Concrete Kerb for Roads - (RD-L-3)-Z7-L03-RD | 9d | 2027-11-22 | 2027-12-01 | RHD4PRSHLDOSRD1200, RHD4ENMSRD2000, RHD4ENMSRD2010, RHD4PRSHLSTAGRD1200, RHD4CZ7L03RD3200, RHD4CZ7C032RD5100 |  | -155d |
|  | 6566 | **RHD4-02-002-L03-(RD)-Traffic Signage** |  | 2027-12-02 | 2027-12-09 |  |  |  |
| RHD4CZ7L03RD8100 |  | Installation of Traffic Signage for Road Network - (RD-L-3)-Z7-L03-RD | 7d | 2027-12-02 | 2027-12-09 | RHD4PRSHLDOSRD1600, RHD4PRSHLSTAGRD1600, RHD4CZ7L03RD5100, RHD4CZ7L03TC2400, RHD4CZ7L03ICT2400, RHD4CZ7C032RD8100 |  | -155d |
|  | 6564 | **RHD4-02-002-L03-(RD)-Precast Interlocking Block Pavers** |  | 2027-12-11 | 2027-12-21 |  |  |  |
| RHD4CZ7L03RD6100 |  | Interlocking block pavers for sidewalk-footpath for Side walks and Parking areas - (RD-L-3)-Z7-L03-RD | 10d | 2027-12-11 | 2027-12-21 | RHD4PRSHLDOSRD1300, RHD4PRSHLDOSRD1400, RHD4ENMSRD2000, RHD4ENMSRD2010, RHD4PRSHLSTAGRD1300, RHD4PRSHLSTAGRD1400, RHD4CZ7L03RD8100 |  | -155d |
|  | 6562 | **RHD4-02-002-L03-(RD)-Bituminous concrete wearing course including tack coat (RC2)** |  | 2027-12-22 | 2027-12-23 |  |  |  |
| RHD4CZ7L03RD4100 |  | Supply, lay and compaction Asphaltic wearing course including tack Coat (RC2)for Road Network - (RD-L-3)-Z7-L03-RD | 2d | 2027-12-22 | 2027-12-23 | RHD4CZ7L03RD5100, RHD4CZ7L03RD6100, RHD4CZ7C032RD4100 |  | -155d |
|  | 6565 | **RHD4-02-002-L03-(RD)-Pavement Marking** |  | 2027-12-25 | 2027-12-29 |  |  |  |
| RHD4CZ7L03RD7100 |  | Pavement Markings for Road Network - (RD-L-3)-Z7-L03-RD | 5d | 2027-12-25 | 2027-12-29 | RHD4PRSHLDOSRD1500, RHD4PRSHLSTAGRD1500, RHD4CZ7L03RD4100, RHD4CZ7C032RD7100 |  | -155d |
|  | 6383 | **RHD4-02-002-Z7-L03-Storm Network - ST** |  | 2026-08-04 | 2027-04-26 |  |  |  |
|  | 6402 | **RHD4-02-002-L03-(ST)-MH Works - 2000 mm diameter** |  | 2026-08-04 | 2027-04-10 |  |  |  |
| RHD4CZ7L03ST3102 |  | Excavation and PC Blinding works for MH 2000 mm - (RD-L-3)-Z7-L03-ST | 2d | 2026-08-04 A | 2026-08-06 A | RHD4ENSDZ7APPST110, RHD4ENMSST2000, RHD4CZ7L03ST2100 | 100% |  |
| RHD4CZ7L03ST3202 |  | Installation of Base for MH 2000 mm - (RD-L-3)-Z7-L03-ST | 2d | 2026-08-06 A | 2026-08-08 A | RHD4PRSHLSTAGST1606, RHD4CZ7L03ST3102 | 100% |  |
| RHD4CZ7L03ST3302 |  | MH Ring and C.Slab works and Backfilling works for MH 2000 mm - (RD-L-3)-Z7-L03-ST | 2d | 2027-04-04 | 2027-04-05 | RHD4PRSHLDOSST1606, RHD4CZ7L03ST3202 |  | -92d |
| RHD4CZ7L03ST3402 |  | Steel Cover for MH 2000 mm - (RD-L-3)-Z7-L03-ST | 2d | 2027-04-06 | 2027-04-07 | RHD4PRSHLDOSST1706, RHD4PRSHLSTAGST1706, RHD4CZ7L03ST3302 |  | -92d |
| RHD4CZ7L03ST3502 |  | Finishing, Benching, Testing works for MH 2000 mm - (RD-L-3)-Z7-L03-ST | 2d | 2027-04-08 | 2027-04-10 | RHD4CZ7L03ST3402 |  | -92d |
|  | 3743 | **RHD4-02-002-L03-(ST)-GRP Pipes - 1100 mm diameter** |  | 2026-08-04 | 2027-04-05 |  |  |  |
| RHD4CZ7L03ST1107 |  | Excavation works for GRP Pipe Line 1100 mm - (RD-L-3)-Z7-L03-ST | 2d | 2026-08-04 A | 2027-03-29 | RHD4ENMSEW2000, RHD4ENMSEW2010, RHD4ENSDZ7APPEW100 SS, RHD4CZ4A013ST6100, RHD4CZ7L03MV2400, RHD4CZ7L03SL2400 | 50% | -157d |
| RHD4CZ7L03ST1207 |  | Bedding works for GRP Pipe Line 1100 mm - (RD-L-3)-Z7-L03-ST | 2d | 2026-08-06 A | 2026-08-08 A | RHD4CZ7L03ST1107 | 100% |  |
| RHD4CZ7L03ST1307 |  | Installing for GRP Pipe Line 1100 mm - (RD-L-3)-Z7-L03-ST | 2d | 2027-03-30 | 2027-03-31 | RHD4CZ7L03ST1207 |  | -139d |
| RHD4CZ7L03ST1407 |  | Primary Test for GRP Pipe Line 1100 mm - (RD-L-3)-Z7-L03-ST | 2d | 2027-04-01 | 2027-04-03 | RHD4CZ7L03ST1307 |  | -139d |
| RHD4CZ7L03ST1507 |  | Backfilling and warning tape works for GRP Pipe Line 1100 mm - (RD-L-3)-Z7-L03-ST | 2d | 2027-04-04 | 2027-04-05 | RHD4CZ7L03ST1407 |  | -139d |
|  | 5254 | **RHD4-02-002-L03-(ST)-GRP Pipes - 900 mm diameter** |  | 2026-08-04 | 2027-03-31 |  |  |  |
| RHD4CZ7L03ST1105 |  | Excavation works for GRP Pipe Line 900 mm - (RD-L-3)-Z7-L03-ST | 2d | 2026-08-04 A | 2026-08-05 A | RHD4CZ7L03ST1107 | 100% |  |
| RHD4CZ7L03ST1205 |  | Bedding works for GRP Pipe Line 900 mm - (RD-L-3)-Z7-L03-ST | 2d | 2026-08-06 A | 2026-08-08 A | RHD4CZ7L03ST1105 | 100% |  |
| RHD4CZ7L03ST1305 |  | Installing for GRP Pipe Line 900 mm - (RD-L-3)-Z7-L03-ST | 2d | 2026-08-09 A | 2026-08-10 A | RHD4CZ7L03ST1205 | 100% |  |
| RHD4CZ7L03ST1505 |  | Backfilling and warning tape works for GRP Pipe Line 900 mm - (RD-L-3)-Z7-L03-ST | 2d | 2026-09-15 A | 2026-09-16 A | RHD4CZ7L03ST1405, RHD4CZ7L03ST1507 | 100% |  |
| RHD4CZ7L03ST1405 |  | Primary Test for GRP Pipe Line 900 mm - (RD-L-3)-Z7-L03-ST | 2d | 2027-03-30 | 2027-03-31 | RHD4CZ7L03ST1305 |  | -135d |
|  | 6022 | **RHD4-02-002-L03-(ST)-MH Works - 1200 mm diameter** |  | 2026-08-04 | 2027-04-26 |  |  |  |
| RHD4CZ7L03ST3100 |  | Excavation and PC Blinding works for MH 1200 mm - (RD-L-3)-Z7-L03-ST | 2d | 2026-08-04 A | 2026-10-24 A | RHD4CZ7L03ST3101 | 100% |  |
| RHD4CZ7L03ST3200 |  | Installation of Base for MH 1200 mm - (RD-L-3)-Z7-L03-ST | 2d | 2026-08-06 A | 2027-04-05 | RHD4CZ7L03ST3100 | 65% | -68d |
| RHD4CZ7L03ST3300 |  | MH Ring and C.Slab works and Backfilling works for MH 1200 mm - (RD-L-3)-Z7-L03-ST | 2d | 2027-04-06 | 2027-04-07 | RHD4CZ7L03ST3200 |  | -68d |
| RHD4CZ7L03ST3400 |  | Steel Cover for MH 1200 mm - (RD-L-3)-Z7-L03-ST | 2d | 2027-04-19 | 2027-04-20 | RHD4CZ7L03ST3300, RHD4CZ7L03ST1500, RHD4CZ7L03ST3401 |  | -77d |
| RHD4CZ7L03ST3500 |  | Finishing, Benching, Testing works for MH 1200 mm - (RD-L-3)-Z7-L03-ST | 2d | 2027-04-25 | 2027-04-26 | RHD4CZ7L03ST3400, RHD4CZ7L03ST3501, RHD4CZ7L03ST1502 |  | -80d |
|  | 6023 | **RHD4-02-002-L03-(ST)-MH Works - 1500 mm diameter** |  | 2026-08-04 | 2027-04-24 |  |  |  |
| RHD4CZ7L03ST3101 |  | Excavation and PC Blinding works for MH 1500 mm - (RD-L-3)-Z7-L03-ST | 5d | 2026-08-04 A | 2026-10-24 A | RHD4CZ7L03ST3102 | 100% |  |
| RHD4CZ7L03ST3201 |  | Installation of Base for MH 1500 mm - (RD-L-3)-Z7-L03-ST | 5d | 2026-08-06 A | 2027-04-08 | RHD4CZ7L03ST3101 | 56% | -80d |
| RHD4CZ7L03ST3301 |  | MH Ring and C.Slab works and Backfilling works for MH 1500 mm - (RD-L-3)-Z7-L03-ST | 5d | 2027-04-10 | 2027-04-14 | RHD4CZ7L03ST3201 |  | -80d |
| RHD4CZ7L03ST3401 |  | Steel Cover for MH 1500 mm - (RD-L-3)-Z7-L03-ST | 3d | 2027-04-15 | 2027-04-18 | RHD4CZ7L03ST3301, RHD4CZ7L03ST1500 |  | -80d |
| RHD4CZ7L03ST3501 |  | Finishing, Benching, Testing works for MH 1500 mm - (RD-L-3)-Z7-L03-ST | 5d | 2027-04-19 | 2027-04-24 | RHD4CZ7L03ST3401 |  | -80d |
|  | 6014 | **RHD4-02-002-L03-(ST)-GRP Pipes - 1200 mm diameter** |  | 2026-08-16 | 2027-02-18 |  |  |  |
| RHD4CZ7L03ST1108 |  | Excavation works for GRP Pipe Line 1200 mm - (RD-L-3)-Z7-L03-ST | 2d | 2026-08-16 A | 2026-08-17 A | RHD4ENSDZ7APPEW100, RHD4ENSDZ7APPRD220, RHD4CZ4A013ST3100 | 100% |  |
| RHD4CZ7L03ST1208 |  | Bedding works for GRP Pipe Line 1200 mm - (RD-L-3)-Z7-L03-ST | 2d | 2027-02-09 | 2027-02-11 | RHD4CZ7L03ST1108 |  | -163.02d |
| RHD4CZ7L03ST1308 |  | Installing for GRP Pipe Line 1200 mm - (RD-L-3)-Z7-L03-ST | 2d | 2027-02-11 | 2027-02-14 | RHD4CZ7L03ST1208 |  | -163.02d |
| RHD4CZ7L03ST1408 |  | Primary Test for GRP Pipe Line 1200 mm - (RD-L-3)-Z7-L03-ST | 2d | 2027-02-14 | 2027-02-16 | RHD4CZ7L03ST1308 |  | -163.02d |
| RHD4CZ7L03ST1508 |  | Backfilling and warning tape works for GRP Pipe Line 1200 mm - (RD-L-3)-Z7-L03-ST | 2d | 2027-02-16 | 2027-02-18 | RHD4CZ7L03ST1408 |  | -163.02d |
|  | 6010 | **RHD4-02-002-L03-(ST)-GRP Pipes - 800 mm diameter** |  | 2026-08-04 | 2027-04-11 |  |  |  |
| RHD4CZ7L03ST1104 |  | Excavation works for GRP Pipe Line 800 mm - (RD-L-3)-Z7-L03-ST | 2d | 2026-08-04 A | 2027-03-31 | RHD4CZ7L03ST1105 | 50% | -144d |
| RHD4CZ7L03ST1204 |  | Bedding works for GRP Pipe Line 800 mm - (RD-L-3)-Z7-L03-ST | 2d | 2026-08-06 A | 2027-04-03 | RHD4CZ7L03ST1104 | 60% | -144d |

| ID | WBS | Task | Duration | Start | Finish | Predecessors | Complete | Total float |
| --- | --- | --- | --- | --- | --- | --- | --- | --- |
| RHD4CZ7L03ST1304 |  | Installing for GRP Pipe Line 800 mm - (RD-L-3)-Z7-L03-ST | 2d | 2026-08-08 A | 2027-04-05 | RHD4CZ7L03ST1204, RHD4CZ7L03ST1308 | 63% | -144d |
| RHD4CZ7L03ST1504 |  | Backfilling and warning tape works for GRP Pipe Line 800 mm - (RD-L-3)-Z7-L03-ST | 3d | 2026-09-16 A | 2027-04-11 | RHD4CZ7L03ST1404, RHD4CZ7L03ST1508 | 60% | -144d |
| RHD4CZ7L03ST1404 |  | Primary Test for GRP Pipe Line 800 mm - (RD-L-3)-Z7-L03-ST | 2d | 2027-04-06 | 2027-04-07 | RHD4CZ7L03ST1304, RHD4CZ7L03ST1408 |  | -144d |
|  | 6008 | **RHD4-02-002-L03-(ST)-GRP Pipes - 600 mm diameter** |  | 2026-08-04 | 2027-04-10 |  |  |  |
| RHD4CZ7L03ST1102 |  | Excavation works for GRP Pipe Line 600 mm - (RD-L-3)-Z7-L03-ST | 2d | 2026-08-04 A | 2026-08-05 A | RHD4CZ7L03ST1103 | 100% |  |
| RHD4CZ7L03ST1202 |  | Bedding works for GRP Pipe Line 600 mm - (RD-L-3)-Z7-L03-ST | 2d | 2026-08-06 A | 2026-08-08 A | RHD4CZ7L03ST1102 | 100% |  |
| RHD4CZ7L03ST1302 |  | Installing for GRP Pipe Line 600 mm - (RD-L-3)-Z7-L03-ST | 2d | 2026-08-09 A | 2026-08-10 A | RHD4CZ7L03ST1202, RHD4CZ7L03ST1304 | 100% |  |
| RHD4CZ7L03ST1502 |  | Backfilling and warning tape works for GRP Pipe Line 600 mm - (RD-L-3)-Z7-L03-ST | 2d | 2026-09-19 A | 2026-09-20 A | RHD4CZ7L03ST1402, RHD4CZ7L03ST1504, RHD4CZ7L03ST1503 | 100% |  |
| RHD4CZ7L03ST1402 |  | Primary Test for GRP Pipe Line 600 mm - (RD-L-3)-Z7-L03-ST | 2d | 2027-04-08 | 2027-04-10 | RHD4CZ7L03ST1302, RHD4CZ7L03ST1404 |  | -143d |
|  | 6006 | **RHD4-02-002-L03-(ST)-GRP Pipes - 400 mm diameter** |  | 2026-08-04 | 2027-04-10 |  |  |  |
| RHD4CZ7L03ST1100 |  | Excavation works for GRP Pipe Line 400 mm - (RD-L-3)-Z7-L03-ST | 2d | 2026-08-04 A | 2026-10-24 A | RHD4CZ7L03ST1102 | 100% |  |
| RHD4CZ7L03ST1200 |  | Bedding works for GRP Pipe Line 400 mm - (RD-L-3)-Z7-L03-ST | 2d | 2026-08-06 A | 2027-04-03 | RHD4CZ7L03ST1100 | 45% | -95d |
| RHD4CZ7L03ST1300 |  | Installing for GRP Pipe Line 400 mm - (RD-L-3)-Z7-L03-ST | 2d | 2026-08-08 A | 2027-04-05 | RHD4CZ7L03ST1200 | 45% | -95d |
| RHD4CZ7L03ST1500 |  | Backfilling and warning tape works for GRP Pipe Line 400 mm - (RD-L-3)-Z7-L03-ST | 2d | 2026-09-19 A | 2027-04-10 | RHD4CZ7L03ST1400 | 45% | -95d |
| RHD4CZ7L03ST1400 |  | Primary Test for GRP Pipe Line 400 mm - (RD-L-3)-Z7-L03-ST | 2d | 2027-04-06 | 2027-04-07 | RHD4CZ7L03ST1300 |  | -95d |
|  | 3739 | **RHD4-02-002-L03-(ST)-GRP Pipes - 700 mm diameter** |  | 2026-08-04 | 2027-04-03 |  |  |  |
| RHD4CZ7L03ST1103 |  | Excavation works for GRP Pipe Line 700 mm - (RD-L-3)-Z7-L03-ST | 2d | 2026-08-04 A | 2026-08-05 A | RHD4CZ7L03ST1104 | 100% |  |
| RHD4CZ7L03ST1203 |  | Bedding works for GRP Pipe Line 700 mm - (RD-L-3)-Z7-L03-ST | 2d | 2026-08-06 A | 2026-08-08 A | RHD4CZ7L03ST1103 | 100% |  |
| RHD4CZ7L03ST1303 |  | Installing for GRP Pipe Line 700 mm - (RD-L-3)-Z7-L03-ST | 2d | 2026-08-09 A | 2026-08-10 A | RHD4CZ7L03ST1203 | 100% |  |
| RHD4CZ7L03ST1503 |  | Backfilling and warning tape works for GRP Pipe Line 700 mm - (RD-L-3)-Z7-L03-ST | 2d | 2026-09-19 A | 2026-09-20 A | RHD4CZ7L03ST1403, RHD4CZ7L03ST1505 | 100% |  |
| RHD4CZ7L03ST1403 |  | Primary Test for GRP Pipe Line 700 mm - (RD-L-3)-Z7-L03-ST | 2d | 2027-04-01 | 2027-04-03 | RHD4CZ7L03ST1303 |  | -137d |
|  | 6396 | **RHD4-02-002-L03-(ST)-GRP Pipes - 1600 mm diameter** |  |  |  |  |  |  |
|  | 6395 | **RHD4-02-002-L03-(ST)-GRP Pipes - 1500 mm diameter** |  |  |  |  |  |  |
|  | 6394 | **RHD4-02-002-L03-(ST)-GRP Pipes - 1400 mm diameter** |  |  |  |  |  |  |
|  | 6393 | **RHD4-02-002-L03-(ST)-GRP Pipes - 1300 mm diameter** |  |  |  |  |  |  |
|  | 6399 | **RHD4-02-002-L03-(ST)-UPVC Pipes - 400 mm diameter** |  |  |  |  |  |  |
|  | 6398 | **RHD4-02-002-L03-(ST)-UPVC Pipes - 300 mm diameter** |  | 2026-08-23 | 2027-04-12 |  |  |  |
| RHD4CZ7L03ST2100 |  | Excavation works for UPVC Pipe Line 300 mm - (RD-L-3)-Z7-L03-ST | 2d | 2026-08-23 A | 2027-04-03 | RHD4ENSDZ7APPST110, RHD4CZ7L03ST1100 | 75% | -94d |
| RHD4CZ7L03ST2200 |  | Bedding works for UPVC Pipe Line 300 mm - (RD-L-3)-Z7-L03-ST | 2d | 2026-08-25 A | 2027-04-05 | RHD4CZ7L03ST2100 | 75% | -94d |
| RHD4CZ7L03ST2300 |  | Installing for UPVC Pipe Line 300 mm - (RD-L-3)-Z7-L03-ST | 2d | 2026-08-29 A | 2027-04-07 | RHD4PRSHLDOSST1106, RHD4PRSHLSTAGST1106, RHD4CZ7L03ST2200 | 75% | -94d |
| RHD4CZ7L03ST2500 |  | Backfilling and warning tape works for UPVC Pipe Line 300 mm - (RD-L-3)-Z7-L03-ST | 3d | 2026-10-17 A | 2027-04-12 | RHD4CZ7L03ST2400, RHD4CZ7L03ST6100 | 50% | -94d |
| RHD4CZ7L03ST2400 |  | Primary Test for UPVC Pipe Line 300 mm - (RD-L-3)-Z7-L03-ST | 2d | 2027-04-08 | 2027-04-10 | RHD4CZ7L03ST2300 |  | -94d |
|  | 6406 | **RHD4-02-002-L03-(ST)-Concrete Encasement** |  | 2026-09-15 | 2027-04-07 |  |  |  |
| RHD4CZ7L03ST6100 |  | Pipe Encasement for Storm Pipelines - (RD-L-3)-Z7-L03-ST | 2d | 2026-09-15 A | 2027-04-07 | RHD4CZ7L03ST2300 SS, RHD4CZ7L03ST2300 FF, RHD4CZ7L03ST2200 | 30% | -92d |
|  | 6407 | **RHD4-02-002-Z7-L03-Catch Basin - ST** |  | 2026-08-25 | 2027-04-24 |  |  |  |
|  | 6408 | **RHD4-02-002-L03-(ST)-Single Catch Basin Works** |  | 2026-08-25 | 2027-04-24 |  |  |  |
| RHD4CZ7L03ST7100 |  | Excavation works for Single Catch Basin - (RD-L-3)-Z7-L03-ST | 3d | 2026-08-25 A | 2027-04-06 | RHD4ENSDZ7APPST110, RHD4CZ7L03ST3102 | 76% | -92d |
| RHD4CZ7L03ST7200 |  | PC Blinding, Installation and Pipe connection for Single Catch Basin - (RD-L-3)-Z7-L03-ST | 3d | 2026-09-19 A | 2027-04-10 | RHD4CZ7L03ST7100 | 76% | -92d |
| RHD4CZ7L03ST7300 |  | Rings & C.Slab & Final Backfill for Single Catch Basin - (RD-L-3)-Z7-L03-ST | 4d | 2026-10-24 A | 2027-04-14 | RHD4PRSHLDOSST1306, RHD4PRSHLSTAGST1306, RHD4CZ7L03ST7200 | 69% | -92d |
| RHD4CZ7L03ST7400 |  | Steel Cover for Single Catch Basin - (RD-L-3)-Z7-L03-ST | 3d | 2027-04-15 | 2027-04-18 | RHD4PRSHLDOSST1706, RHD4CZ7L03ST7300 |  | -92d |
| RHD4CZ7L03ST7500 |  | Finishing and Insulation works for Single Catch Basin - (RD-L-3)-Z7-L03-ST | 5d | 2027-04-19 | 2027-04-24 | RHD4CZ7L03ST7400 |  | -92d |
|  | 6409 | **RHD4-02-002-L03-(ST)-Double Catch Basin Works** |  |  |  |  |  |  |
|  | 6432 | **RHD4-02-002-Z7-L03-Sewage Network - SW** |  | 2026-08-11 | 2027-06-20 |  |  |  |
|  | 1 | **Wash out Chamber for HDPE force Main** |  | 2027-04-20 | 2027-04-27 |  |  |  |
| RHD4CZ7L03SW4100 |  | Excavation and Bedding for Wash out Chamber for HDPE force Main - (RD-L-3)-Z7-L03-SW | 2d | 2027-04-20 | 2027-04-21 | RHD4CZ7L03SW2500 |  | -99d |
| RHD4CZ7L03SW4200 |  | PC works for Wash out Chamber for HDPE force Main - (RD-L-3)-Z7-L03-SW | 2d | 2027-04-22 | 2027-04-23 | RHD4CZ7L03SW4100 |  | -99d |
| RHD4CZ7L03SW4300 |  | Installation for Wash out Chamber for HDPE force Main - (RD-L-3)-Z7-L03-SW | 2d | 2027-04-24 | 2027-04-25 | RHD4CZ7L03SW4200 |  | -99d |
| RHD4CZ7L03SW4400 |  | Backfilling works for Wash out Chamber for HDPE force Main - (RD-L-3)-Z7-L03-SW | 2d | 2027-04-26 | 2027-04-27 | RHD4CZ7L03SW4300 |  | -99d |
|  | 2 | **Wash out Valves** |  | 2027-05-05 | 2027-05-08 |  |  |  |
| RHD4CZ7L03SW5100 |  | Installation for Wash out Valves for HDPE force Main - (RD-L-3)-Z7-L03-SW | 2d | 2027-05-05 | 2027-05-06 | RHD4CZ7L03SW2800 |  | -108d |
| RHD4CZ7L03SW5200 |  | Stem and Service box for Wash out Valves for HDPE force Main - (RD-L-3)-Z7-L03-SW | 2d | 2027-05-07 | 2027-05-08 | RHD4CZ7L03SW5100, RHD4CZ7L03SW4400 |  | -108d |
|  | 3 | **Air Valves** |  | 2027-05-05 | 2027-05-08 |  |  |  |
| RHD4CZ7L03SW5101 |  | Installation for Air Valves for HDPE force Main - (RD-L-3)-Z7-L03-SW | 2d | 2027-05-05 | 2027-05-06 | RHD4CZ7L03SW2800 |  | -108d |
| RHD4CZ7L03SW5201 |  | Stem and Service box for Air Valves for HDPE force Main - (RD-L-3)-Z7-L03-SW | 2d | 2027-05-07 | 2027-05-08 | RHD4CZ7L03SW5101, RHD4CZ7L03SW4400 |  | -108d |
|  | 4 | **Air Valve Chamber** |  | 2027-04-20 | 2027-04-28 |  |  |  |
| RHD4CZ7L03SW4101 |  | Excavation and Bedding for Air Valve Chamber for HDPE force Main - (RD-L-3)-Z7-L03-SW | 2d | 2027-04-20 | 2027-04-21 | RHD4CZ7L03SW4100 SS |  | -97d |
| RHD4CZ7L03SW4201 |  | PC works for Air Valve Chamber for HDPE force Main - (RD-L-3)-Z7-L03-SW | 2d | 2027-04-22 | 2027-04-23 | RHD4CZ7L03SW4101 |  | -97d |
| RHD4CZ7L03SW4301 |  | Installation for Air Valve Chamber for HDPE force Main - (RD-L-3)-Z7-L03-SW | 2d | 2027-04-24 | 2027-04-25 | RHD4CZ7L03SW4201 |  | -97d |
| RHD4CZ7L03SW4401 |  | Backfilling works for Air Valve Chamber for HDPE force Main - (RD-L-3)-Z7-L03-SW | 2d | 2027-04-27 | 2027-04-28 | RHD4CZ7L03SW4301, RHD4CZ7L03ST3500, RHD4CZ7L03ST3501 |  | -98d |
|  | 5 | **Discharge Chamber** |  | 2027-04-20 | 2027-04-27 |  |  |  |
| RHD4CZ7L03SW4103 |  | Excavation and Bedding for Discharge Chamber for HDPE force Main - (RD-L-3)-Z7-L03-SW | 2d | 2027-04-20 | 2027-04-21 | RHD4CZ7L03SW4101 SS |  | -97d |
| RHD4CZ7L03SW4203 |  | PC works for Discharge Chamber for HDPE force Main - (RD-L-3)-Z7-L03-SW | 2d | 2027-04-22 | 2027-04-23 | RHD4CZ7L03SW4103 |  | -97d |
| RHD4CZ7L03SW4303 |  | Installation for Discharge Chamber for HDPE force Main - (RD-L-3)-Z7-L03-SW | 2d | 2027-04-24 | 2027-04-25 | RHD4CZ7L03SW4203 |  | -97d |
| RHD4CZ7L03SW4403 |  | Backfilling works for Discharge Chamber for HDPE force Main - (RD-L-3)-Z7-L03-SW | 2d | 2027-04-26 | 2027-04-27 | RHD4CZ7L03SW4303 |  | -97d |
|  | 4358 | **RHD4-02-002-L03-(SW)-HDPE Pipes - 250 mm diameter** |  | 2027-04-18 | 2027-05-13 |  |  |  |
| RHD4CZ7L03SW2600 |  | Excavation works for HDPE Force Main Pipeline 250 mm - (RD-L-3)-Z7-L03-SW | 4d | 2027-04-18 | 2027-04-21 | RHD4CZ7L03SW1100 |  | -93d |
| RHD4CZ7L03SW2700 |  | Bedding works for HDPE Force Main Pipeline 250 mm - (RD-L-3)-Z7-L03-SW | 4d | 2027-04-22 | 2027-04-26 | RHD4CZ7L03SW2600 |  | -93d |
| RHD4CZ7L03SW2800 |  | Installing for HDPE Force Main Pipeline 250 mm - (RD-L-3)-Z7-L03-SW | 7d | 2027-04-27 | 2027-05-04 | RHD4CZ7L03SW2700 |  | -93d |
| RHD4CZ7L03SW2900 |  | Primary Test for HDPE Force Main Pipeline 250 mm - (RD-L-3)-Z7-L03-SW | 3d | 2027-05-05 | 2027-05-08 | RHD4CZ7L03SW2800 |  | -93d |
| RHD4CZ7L03SW3000 |  | Backfilling and warning tape works for HDPE Force Main Pipeline 250 mm - (RD-L-3)-Z7-L03-SW | 5d | 2027-05-09 | 2027-05-13 | RHD4CZ7L03SW2900 |  | -93d |

| ID | WBS | Task | Duration | Start | Finish | Predecessors | Complete | Total float |
| --- | --- | --- | --- | --- | --- | --- | --- | --- |
|  | 6444 | **RHD4-02-002-L03-(SW)-MH Works - 1500 mm diameter** |  |  |  |  |  |  |
|  | 6442 | **RHD4-02-002-L03-(SW)-MH Works - 1200 mm diameter** |  | 2026-08-11 | 2027-06-20 |  |  |  |
| RHD4CZ7L03SW3100 |  | Excavation and PC Blinding works for MH 1200 mm - (RD-L-3)-Z7-L03-SW | 10d | 2026-08-11 A | 2027-04-24 | RHD4ENSDZ7APPSW120, RHD4CZ7L03SW2600 | 70% | -72d |
| RHD4CZ7L03SW3200 |  | Installation of Base for MH 1200 mm - (RD-L-3)-Z7-L03-SW | 17d | 2026-08-12 A | 2027-04-28 | RHD4CZ7L03SW3100 | 70% | -72d |
| RHD4CZ7L03SW3300 |  | MH Ring and C.Slab works and Backfilling works for MH 1200 mm - (RD-L-3)-Z7-L03-SW | 17d | 2027-04-29 | 2027-05-23 | RHD4PRSHLDOSSW1306, RHD4PRSHLSTAGSW1306, RHD4CZ7L03SW3200 |  | -72d |
| RHD4CZ7L03SW3400 |  | Steel Cover for MH 1200 mm - (RD-L-3)-Z7-L03-SW | 7d | 2027-05-24 | 2027-05-31 | RHD4PRSHLDOSSW1406, RHD4PRSHLSTAGSW1406, RHD4CZ7L03SW3300 |  | -72d |
| RHD4CZ7L03SW3500 |  | Finishing, Benching, Testing works for MH 1200 mm - (RD-L-3)-Z7-L03-SW | 17d | 2027-06-01 | 2027-06-20 | RHD4CZ7L03SW3400 |  | -72d |
|  | 6437 | **RHD4-02-002-L03-(SW)-GRP Pipes - 700 mm diameter** |  |  |  |  |  |  |
|  | 6434 | **RHD4-02-002-L03-(SW)-GRP Pipes - 400 mm diameter** |  | 2027-04-13 | 2027-04-24 |  |  |  |
| RHD4CZ7L03SW1101 |  | Excavation works for GRP Pipe Line 400 mm - (RD-L-3)-Z7-L03-SW | 2d | 2027-04-13 | 2027-04-14 | RHD4ENSDZ7APPSW120, RHD4CZ7L03ST2500 |  | -94d |
| RHD4CZ7L03SW1201 |  | Bedding works for GRP Pipe Line 400 mm - (RD-L-3)-Z7-L03-SW | 2d | 2027-04-15 | 2027-04-17 | RHD4CZ7L03SW1101 |  | -94d |
| RHD4CZ7L03SW1301 |  | Installing for GRP Pipe Line 400 mm - (RD-L-3)-Z7-L03-SW | 2d | 2027-04-18 | 2027-04-19 | RHD4PRSHLSTAGSW1106, RHD4CZ7L03SW1201, RHD4PRSHLDOSSW1306, RHD4PRSHLPOSW1100, RHD4PRSHLDOSSW1106 |  | -94d |
| RHD4CZ7L03SW1401 |  | Primary Test for GRP Pipe Line 400 mm - (RD-L-3)-Z7-L03-SW | 2d | 2027-04-20 | 2027-04-21 | RHD4CZ7L03SW1301 |  | -94d |
| RHD4CZ7L03SW1501 |  | Backfilling and warning tape works for GRP Pipe Line 400 mm - (RD-L-3)-Z7-L03-SW | 2d | 2027-04-22 | 2027-04-24 | RHD4CZ7L03SW1401 |  | -94d |
|  | 6433 | **RHD4-02-002-L03-(SW)-GRP Pipes - 300 mm diameter** |  | 2026-08-11 | 2027-04-26 |  |  |  |
| RHD4CZ7L03SW1100 |  | Excavation works for GRP Pipe Line 300 mm - (RD-L-3)-Z7-L03-SW | 2d | 2026-08-11 A | 2027-04-17 | RHD4ENSDZ7APPSW120, RHD4CZ7L03SW1101 | 62% | -94d |
| RHD4CZ7L03SW1200 |  | Bedding works for GRP Pipe Line 300 mm - (RD-L-3)-Z7-L03-SW | 2d | 2026-08-13 A | 2027-04-19 | RHD4CZ7L03SW1100 | 62% | -94d |
| RHD4CZ7L03SW1300 |  | Installing for GRP Pipe Line 300 mm - (RD-L-3)-Z7-L03-SW | 2d | 2026-09-20 A | 2027-04-21 | RHD4PRSHLSTAGSW1106, RHD4CZ7L03SW1200, RHD4CZ7L03SW1301, RHD4PRSHLDOSSW1306, RHD4PRSHLPOSW1100, RHD4PRSHLDOSSW1106 | 62% | -94d |
| RHD4CZ7L03SW1400 |  | Primary Test for GRP Pipe Line 300 mm - (RD-L-3)-Z7-L03-SW | 2d | 2027-04-22 | 2027-04-24 | RHD4CZ7L03SW1300 |  | -94d |
| RHD4CZ7L03SW1500 |  | Backfilling and warning tape works for GRP Pipe Line 300 mm - (RD-L-3)-Z7-L03-SW | 2d | 2027-04-25 | 2027-04-26 | RHD4CZ7L03SW1400, RHD4CZ7L03SW1501 |  | -94d |
|  | 6438 | **RHD4-02-002-L03-(SW)-UPVC Pipes - 200 mm diameter** |  | 2026-08-11 | 2027-04-19 |  |  |  |
| RHD4CZ7L03SW2100 |  | Excavation works for UPVC Pipe Line 200 mm - (RD-L-3)-Z7-L03-SW | 3d | 2026-08-11 A | 2026-09-19 A | RHD4ENSDZ7APPSW120, RHD4CZ7L03SW1100 | 100% |  |
| RHD4CZ7L03SW2200 |  | Bedding works for UPVC Pipe Line 200 mm - (RD-L-3)-Z7-L03-SW | 3d | 2026-08-12 A | 2026-09-21 A | RHD4CZ7L03SW2100 | 100% |  |
| RHD4CZ7L03SW2300 |  | Installing for UPVC Pipe Line 200 mm - (RD-L-3)-Z7-L03-SW | 4d | 2026-08-15 A | 2026-09-23 A | RHD4PRSHLSTAGSW1006, RHD4CZ7L03SW2200, RHD4PRSHLPOSW1000, RHD4PRSHLDOSSW1006, RHD4PRSHLDOSSW1306, RHD4PRSHLPOSW1100, RHD4PRSHLDOSSW1106, RHD4PRSHLDOSSW1004, RHD4PRSHLDOSSW1304, RHD4PRSHLDOSSW1104 | 100% |  |
| RHD4CZ7L03SW2500 |  | Backfilling and warning tape works for UPVC Pipe Line 200 mm - (RD-L-3)-Z7-L03-SW | 3d | 2026-08-17 A | 2026-10-27 A | RHD4CZ7L03SW2400 | 100% |  |
| RHD4CZ7L03SW2400 |  | Primary Test for UPVC Pipe Line 200 mm - (RD-L-3)-Z7-L03-SW | 2d | 2027-04-18 | 2027-04-19 | RHD4CZ7L03SW2300 |  | -89d |
|  | 6441 | **RHD4-02-002-L03-(SW)-Concrete Encasement** |  |  |  |  |  |  |
|  | 6469 | **RHD4-02-002-Z7-L03-Potable Network - PT** |  | 2027-04-20 | 2027-07-04 |  |  |  |
|  | 6470 | **RHD4-02-002-L03-(PT)-HDPE Pipes - 110 mm diameter** |  | 2027-04-26 | 2027-06-03 |  |  |  |
| RHD4CZ7L03PT1100 |  | Excavation works for HDPE Pipline 110 mm - (RD-L-3)-Z7-L03-PT | 2d | 2027-04-26 | 2027-04-27 | RHD4ENSDZ7APPPT130, RHD4ENMSPT2000, RHD4CZ7L03PT1101 |  | -76d |
| RHD4CZ7L03PT1200 |  | Bedding works for HDPE Pipline 110 mm - (RD-L-3)-Z7-L03-PT | 2d | 2027-05-01 | 2027-05-02 | RHD4CZ7L03PT1100, RHD4CZ7L03PT1201 |  | -78d |
| RHD4CZ7L03PT1300 |  | Installing for HDPE Pipline 110 mm - (RD-L-3)-Z7-L03-PT | 2d | 2027-05-09 | 2027-05-10 | RHD4PRSHLDOSPT1000, RHD4PRSHLSTAGPT1000, RHD4CZ7L03PT1200, RHD4CZ7L03PT1301 |  | -83d |
| RHD4CZ7L03PT1400 |  | Primary Test for HDPE Pipline 110 mm - (RD-L-3)-Z7-L03-PT | 2d | 2027-05-26 | 2027-05-27 | RHD4CZ7L03PT1300, RHD4CZ7L03PT1401, RHD4CZ7L03PT5100 |  | -73d |
| RHD4CZ7L03PT1500 |  | Backfilling and warning tape works for HDPE Pipline 110 mm - (RD-L-3)-Z7-L03-PT | 2d | 2027-06-02 | 2027-06-03 | RHD4CZ7L03PT1400, RHD4CZ7L03PT1501 |  | -77d |
|  | 6102 | **RHD4-02-002-L03-(PT)-Air Valve Chambers** |  | 2027-06-12 | 2027-06-20 |  |  |  |
| RHD4CZ7L03PT2102 |  | Excavation and Bedding for Air Valve Chambers for Potable Water Network - (RD-L-3)-Z7-L03-PT | 2d | 2027-06-12 | 2027-06-13 | RHD4CZ7L03PT3202 SS |  | -80d |
| RHD4CZ7L03PT2202 |  | PC works for Air Valve Chambers for Potable Water Network - (RD-L-3)-Z7-L03-PT | 2d | 2027-06-14 | 2027-06-15 | RHD4CZ7L03PT2102 |  | -80d |
| RHD4CZ7L03PT2302 |  | Installation for Air Valve Chambers for Potable Water Network - (RD-L-3)-Z7-L03-PT | 2d | 2027-06-16 | 2027-06-17 | RHD4CZ7L03PT2202 |  | -80d |
| RHD4CZ7L03PT2402 |  | Backfilling works for Air Valve Chambers for Potable Water Network - (RD-L-3)-Z7-L03-PT | 2d | 2027-06-19 | 2027-06-20 | RHD4CZ7L03PT2302 |  | -80d |
|  | 6103 | **RHD4-02-002-L03-(PT)-Air Valves** |  | 2027-06-19 | 2027-06-22 |  |  |  |
| RHD4CZ7L03PT3103 |  | Installation for Air Valves for Potable Water Network - (RD-L-3)-Z7-L03-PT | 2d | 2027-06-19 | 2027-06-20 | RHD4CZ7L03PT2302 |  | -80d |
| RHD4CZ7L03PT3203 |  | Stem and Service box for Air Valves for Potable Water Network - (RD-L-3)-Z7-L03-PT | 2d | 2027-06-21 | 2027-06-22 | RHD4CZ7L03PT3103, RHD4CZ7L03PT2402 |  | -80d |
|  | 6478 | **RHD4-02-002-L03-(PT)-Wash out Valve Chambers** |  | 2027-06-02 | 2027-06-10 |  |  |  |
| RHD4CZ7L03PT2101 |  | Excavation and Bedding for Wash out Valve Chambers for Potable Water Network - (RD-L-3)-Z7-L03-PT | 2d | 2027-06-02 | 2027-06-03 | RHD4ENSDZ7APPPT130, RHD4CZ7L03PT1501 |  | -83d |
| RHD4CZ7L03PT2201 |  | PC works for Wash out Valve Chambers for Potable Water Network - (RD-L-3)-Z7-L03-PT | 2d | 2027-06-05 | 2027-06-06 | RHD4CZ7L03PT2101 |  | -83d |
| RHD4CZ7L03PT2301 |  | Installation for Wash out Valve Chambers for Potable Water Network - (RD-L-3)-Z7-L03-PT | 2d | 2027-06-07 | 2027-06-08 | RHD4PRSHLDOSPT1100, RHD4PRSHLDOSPT1400, RHD4PRSHLSTAGPT1100, RHD4PRSHLSTAGPT1400, RHD4CZ7L03PT2201 |  | -83d |
| RHD4CZ7L03PT2401 |  | Backfilling works for Wash out Valve Chambers for Potable Water Network - (RD-L-3)-Z7-L03-PT | 2d | 2027-06-09 | 2027-06-10 | RHD4CZ7L03PT2301 |  | -83d |
|  | 6479 | **RHD4-02-002-L03-(PT)-Wash out Valves** |  | 2027-06-02 | 2027-06-13 |  |  |  |
| RHD4CZ7L03PT3102 |  | Installation for Wash out Valves for Potable Water Network - (RD-L-3)-Z7-L03-PT | 2d | 2027-06-02 | 2027-06-03 | RHD4PRSHLDOSPT1200, RHD4PRSHLSTAGPT1200, RHD4CZ7L03PT2101 SS |  | -74d |
| RHD4CZ7L03PT3202 |  | Stem and Service box for Wash out Valves for Potable Water Network - (RD-L-3)-Z7-L03-PT | 2d | 2027-06-12 | 2027-06-13 | RHD4PRSHLDOSPT1300, RHD4PRSHLSTAGPT1300, RHD4CZ7L03PT3102, RHD4CZ7L03PT2401 |  | -80d |
|  | 6482 | **RHD4-02-002-L03-(PT)-Fire Hydrant** |  | 2027-06-12 | 2027-07-03 |  |  |  |
| RHD4CZ7L03PT4100 |  | Excavation and Bedding and Pipe Installation for Fire Hydrant - (RD-L-3)-Z7-L03-PT | 5d | 2027-06-12 | 2027-06-16 | RHD4ENSDZ7APPPT130, RHD4CZ7L03PT1501, RHD4CZ7L03PT1500, RHD4CZ7L03PT2401 |  | -83d |
| RHD4CZ7L03PT4200 |  | Valve Installation for Fire Hydrant - (RD-L-3)-Z7-L03-PT | 4d | 2027-06-17 | 2027-06-21 | RHD4CZ7L03PT4100 |  | -83d |
| RHD4CZ7L03PT4300 |  | Stem for Fire Hydrant - (RD-L-3)-Z7-L03-PT | 4d | 2027-06-22 | 2027-06-26 | RHD4CZ7L03PT4200 |  | -83d |
| RHD4CZ7L03PT4400 |  | Fire Installation for Fire Hydrant - (RD-L-3)-Z7-L03-PT | 4d | 2027-06-27 | 2027-06-30 | RHD4PRSHLDOSPT1500, RHD4PRSHLSTAGPT1500, RHD4CZ7L03PT4300 |  | -83d |
| RHD4CZ7L03PT4500 |  | Protection Barriers for Fire Hydrant - (RD-L-3)-Z7-L03-PT | 2d | 2027-07-01 | 2027-07-03 | RHD4CZ7L03PT4400 |  | -83d |
|  | 6483 | **RHD4-02-002-L03-(PT)-Concrete Encasement** |  | 2027-05-09 | 2027-05-22 |  |  |  |
| RHD4CZ7L03PT5100 |  | Pipe Encasement for Potable Pipelines - (RD-L-3)-Z7-L03-PT | 8d | 2027-05-09 | 2027-05-22 | RHD4CZ7L03PT1301 FF, RHD4CZ7L03PT1300 FF, RHD4CZ7L03PT1301 SS, RHD4CZ7L03PT1300 SS, RHD4CZ7L03PT1201 |  | -83d |
|  | 6097 | **RHD4-02-002-L03-(PT)-Gate Valves (Direct Buried)** |  | 2027-06-23 | 2027-07-04 |  |  |  |
| RHD4CZ7L03PT3100 |  | Installation for Direct Buried Gate Valves - (RD-L-3)-Z7-L03-PT | 5d | 2027-06-23 | 2027-06-28 | RHD4CZ7L03PT3102 SS, RHD4CZ7L03PT3203 |  | -80d |
| RHD4CZ7L03PT3200 |  | Stem and Service box for Direct Buried Gate Valves - (RD-L-3)-Z7-L03-PT | 5d | 2027-06-29 | 2027-07-04 | RHD4CZ7L03PT3100, RHD4CZ7L03ST3500 |  | -80d |
|  | 6471 | **RHD4-02-002-L03-(PT)-HDPE Pipes - 160 mm diameter** |  | 2027-04-20 | 2027-06-01 |  |  |  |
| RHD4CZ7L03PT1101 |  | Excavation works for HDPE Pipline 160 mm - (RD-L-3)-Z7-L03-PT | 5d | 2027-04-20 | 2027-04-25 | RHD4ENSDZ7APPPT130, RHD4ENMSPT2000, RHD4CZ7L03SW2500 |  | -89d |
| RHD4CZ7L03PT1201 |  | Bedding works for HDPE Pipline 160 mm - (RD-L-3)-Z7-L03-PT | 4d | 2027-04-26 | 2027-04-29 | RHD4CZ7L03PT1101 |  | -83d |
| RHD4CZ7L03PT1301 |  | Installing for HDPE Pipline 160 mm - (RD-L-3)-Z7-L03-PT | 7d | 2027-05-01 | 2027-05-08 | RHD4PRSHLDOSPT1000, RHD4PRSHLSTAGPT1000, RHD4CZ7L03PT1201 |  | -83d |
| RHD4CZ7L03PT1401 |  | Primary Test for HDPE Pipline 160 mm - (RD-L-3)-Z7-L03-PT | 3d | 2027-05-23 | 2027-05-25 | RHD4CZ7L03PT1301, RHD4CZ7L03PT5100 |  | -83d |
| RHD4CZ7L03PT1501 |  | Backfilling and warning tape works for HDPE Pipline 160 mm - (RD-L-3)-Z7-L03-PT | 6d | 2027-05-26 | 2027-06-01 | RHD4CZ7L03PT1401 |  | -83d |
|  | 6484 | **RHD4-02-002-Z7-L03-Irrigation Network - IRR** |  | 2027-04-26 | 2027-08-14 |  |  |  |
|  | 6485 | **RHD4-02-002-L03-(IRR)-HDPE Pipes - 160 mm diameter** |  | 2027-05-02 | 2027-05-12 |  |  |  |
| RHD4CZ7L03IRR1100 |  | Excavation works for HDPE Pipline 160 mm - (RD-L-3)-Z7-L03-IRR | 2d | 2027-05-02 | 2027-05-03 | RHD4ENSDZ7APPIRR140, RHD4ENMSRR2000, RHD4CZ7L03PT1101, RHD4CZ7L03IRR1104 |  | -80d |

| ID | WBS | Task | Duration | Start | Finish | Predecessors | Total float |
| --- | --- | --- | --- | --- | --- | --- | --- |
| RHD4CZ7L03IRR1200 |  | Bedding works for HDPE Pipline 160 mm - (RD-L-3)-Z7-L03-IRR | 2d | 2027-05-04 | 2027-05-05 | RHD4CZ7L03IRR1100 | -80d |
| RHD4CZ7L03IRR1300 |  | Installing for HDPE Pipline 160 mm - (RD-L-3)-Z7-L03-IRR | 2d | 2027-05-06 | 2027-05-08 | RHD4PRSHLDOSIRR1000, RHD4PRSHLSTAGIRR1000, RHD4CZ7L03IRR1200 | -80d |
| RHD4CZ7L03IRR1400 |  | Primary Test for HDPE Pipline 160 mm - (RD-L-3)-Z7-L03-IRR | 2d | 2027-05-09 | 2027-05-10 | RHD4CZ7L03IRR1300 | -80d |
| RHD4CZ7L03IRR1500 |  | Backfilling and warning tape works for HDPE Pipline 160 mm - (RD-L-3)-Z7-L03-IRR | 2d | 2027-05-11 | 2027-05-12 | RHD4CZ7L03IRR1400 | -80d |
|  | 6489 | **RHD4-02-002-L03-(IRR)-HDPE Pipes - 315 mm diameter** |  | 2027-04-26 | 2027-05-27 |  |  |
| RHD4CZ7L03IRR1104 |  | Excavation works for HDPE Pipline 315 mm - (RD-L-3)-Z7-L03-IRR | 5d | 2027-04-26 | 2027-05-01 | RHD4ENSDZ7APPIRR140, RHD4ENMSRR2000, RHD4CZ7L03PT1101 | -89d |
| RHD4CZ7L03IRR1204 |  | Bedding works for HDPE Pipline 315 mm - (RD-L-3)-Z7-L03-IRR | 5d | 2027-05-02 | 2027-05-06 | RHD4CZ7L03IRR1104 | -89d |
| RHD4CZ7L03IRR1304 |  | Installing for HDPE Pipline 315 mm - (RD-L-3)-Z7-L03-IRR | 5d | 2027-05-08 | 2027-05-12 | RHD4PRSHLDOSIRR1000, RHD4PRSHLSTAGIRR1000, RHD4CZ7L03IRR1204 | -89d |
| RHD4CZ7L03IRR1404 |  | Primary Test for HDPE Pipline 315 mm - (RD-L-3)-Z7-L03-IRR | 3d | 2027-05-13 | 2027-05-20 | RHD4CZ7L03IRR1304 | -89d |
| RHD4CZ7L03IRR1504 |  | Backfilling and warning tape works for HDPE Pipline 315 mm - (RD-L-3)-Z7-L03-IRR | 6d | 2027-05-22 | 2027-05-27 | RHD4CZ7L03IRR1404 | -89d |
|  | 6490 | **RHD4-02-002-L03-(IRR)-HDPE Pipes - 400 mm diameter** |  |  |  |  |  |
|  | 6493 | **RHD4-02-002-L03-(IRR)-Gate Valves (Direct Buried)** |  | 2027-05-10 | 2027-05-20 |  |  |
| RHD4CZ7L03IRR3100 |  | Installation for Direct Buried Gate Valves - (RD-L-3)-Z7-L03-IRR | 3d | 2027-05-10 | 2027-05-12 | RHD4PRSHLDOSIRR1100, RHD4PRSHLSTAGIRR1100, RHD4CZ7L03IRR1304 SS, RHD4CZ7L03IRR1304 FF, RHD4CZ7L03IRR1300 SS, RHD4CZ7L03IRR1300 FF | -78d |
| RHD4CZ7L03IRR3200 |  | Stem and Service box for Direct Buried Gate Valves - (RD-L-3)-Z7-L03-IRR | 3d | 2027-05-13 | 2027-05-20 | RHD4PRSHLDOSIRR1300, RHD4PRSHLSTAGIRR1300, RHD4CZ7L03IRR3100, RHD4CZ7L03IRR1500 | -78d |
|  | 6494 | **RHD4-02-002-L03-(IRR)-Butterfly Valve Chamber** |  | 2027-05-29 | 2027-08-11 |  |  |
| RHD4CZ7L03IRR2100 |  | Excavation and Bedding for Butterfly Valve Chamber for Irrigation Network - (RD-L-3)-Z7-L03-IRR | 2d | 2027-05-29 | 2027-05-30 | RHD4ENSDZ7APPIRR140, RHD4CZ7L03IRR1504, RHD4CZ7L03IRR1500 | -86d |
| RHD4CZ7L03IRR2200 |  | PC works for Butterfly Valve Chamber for Irrigation Network - (RD-L-3)-Z7-L03-IRR | 2d | 2027-05-31 | 2027-06-01 | RHD4CZ7L03IRR2100 | -86d |
| RHD4CZ7L03IRR2300 |  | Installation for Butterfly Valve Chamber for Irrigation Network - (RD-L-3)-Z7-L03-IRR | 2d | 2027-06-02 | 2027-06-03 | RHD4PRSHLDOSIRR1200, RHD4PRSHLDOSIRR1400, RHD4PRSHLSTAGIRR1200, RHD4PRSHLSTAGIRR1400, RHD4CZ7L03IRR2200 | -86d |
| RHD4CZ7L03IRR2400 |  | Backfilling works for Butterfly Valve Chamber for Irrigation Network - (RD-L-3)-Z7-L03-IRR | 2d | 2027-08-09 | 2027-08-11 | RHD4CZ7L03IRR2300, RHD4CZ7C032MV1200, RHD4CZ7C032MV3300 | -142.02d |
|  | 6495 | **RHD4-02-002-L03-(IRR)-Butterfly Valves** |  | 2027-06-05 | 2027-08-14 |  |  |
| RHD4CZ7L03IRR3101 |  | Installation for Butterfly Valves for Irrigation Network - (RD-L-3)-Z7-L03-IRR | 2d | 2027-06-05 | 2027-06-06 | RHD4PRSHLDOSIRR1100, RHD4PRSHLSTAGIRR1100, RHD4CZ7L03IRR2300 | -86d |
| RHD4CZ7L03IRR3201 |  | Stem and Service box for Butterfly Valves for Irrigation Network - (RD-L-3)-Z7-L03-IRR | 2d | 2027-08-11 | 2027-08-14 | RHD4PRSHLDOSIRR1300, RHD4PRSHLSTAGIRR1300, RHD4CZ7L03IRR3101, RHD4CZ7L03IRR2400 | -142.02d |
|  | 6498 | **RHD4-02-002-L03-(IRR)-Air Valve Chamber** |  | 2027-05-29 | 2027-06-06 |  |  |
| RHD4CZ7L03IRR2102 |  | Excavation and Bedding for Valve Chamber for Irrigation Network - (RD-L-3)-Z7-L03-IRR | 2d | 2027-05-29 | 2027-05-30 | RHD4ENSDZ7APPIRR140, RHD4CZ7L03IRR1504, RHD4CZ7L03IRR1500 | -89d |
| RHD4CZ7L03IRR2202 |  | PC works for Valve Chamber for Irrigation Network - (RD-L-3)-Z7-L03-IRR | 2d | 2027-05-31 | 2027-06-01 | RHD4CZ7L03IRR2102 | -89d |
| RHD4CZ7L03IRR2302 |  | Installation for Valve Chamber for Irrigation Network - (RD-L-3)-Z7-L03-IRR | 2d | 2027-06-02 | 2027-06-03 | RHD4PRSHLDOSIRR1200, RHD4PRSHLDOSIRR1400, RHD4PRSHLSTAGIRR1200, RHD4PRSHLSTAGIRR1400, RHD4CZ7L03IRR2202 | -89d |
| RHD4CZ7L03IRR2402 |  | Backfilling works for Valve Chamber for Irrigation Network - (RD-L-3)-Z7-L03-IRR | 2d | 2027-06-05 | 2027-06-06 | RHD4CZ7L03IRR2302 | -89d |
|  | 6499 | **RHD4-02-002-L03-(IRR)-Air Valves** |  | 2027-06-05 | 2027-06-08 |  |  |
| RHD4CZ7L03IRR3103 |  | Installation for Air Valves for Irrigation Network - (RD-L-3)-Z7-L03-IRR | 2d | 2027-06-05 | 2027-06-06 | RHD4PRSHLDOSIRR1100, RHD4PRSHLSTAGIRR1100, RHD4CZ7L03IRR2302 | -89d |
| RHD4CZ7L03IRR3203 |  | Stem and Service box for Air Valves for Irrigation Network - (RD-L-3)-Z7-L03-IRR | 2d | 2027-06-07 | 2027-06-08 | RHD4PRSHLDOSIRR1300, RHD4PRSHLSTAGIRR1300, RHD4CZ7L03IRR3103, RHD4CZ7L03IRR2402 | -89d |
|  | 6685 | **RHD4-02-002-L03-(IRR)-Wash out Chamber** |  | 2027-05-02 | 2027-05-10 |  |  |
| RHD4CZ7L03IRR2101 |  | Excavation and Bedding for Wash out Chamber for Irrigation Network - (RD-L-3)-Z7-L03-IRR | 2d | 2027-05-02 | 2027-05-03 | RHD4CZ7L03IRR1100 SS | -76d |
| RHD4CZ7L03IRR2201 |  | PC works for Wash out Chamber for Irrigation Network - (RD-L-3)-Z7-L03-IRR | 2d | 2027-05-04 | 2027-05-05 | RHD4CZ7L03IRR2101 | -76d |
| RHD4CZ7L03IRR2301 |  | Installation for Wash out Chamber for Irrigation Network - (RD-L-3)-Z7-L03-IRR | 2d | 2027-05-06 | 2027-05-08 | RHD4CZ7L03IRR2201 | -76d |
| RHD4CZ7L03IRR2401 |  | Backfilling works for Wash out Chamber for Irrigation Network - (RD-L-3)-Z7-L03-IRR | 2d | 2027-05-09 | 2027-05-10 | RHD4CZ7L03IRR2301 | -76d |
|  | 6686 | **RHD4-02-002-L03-(IRR)-Wash out Valves** |  | 2027-05-09 | 2027-07-06 |  |  |
| RHD4CZ7L03IRR3102 |  | Installation for Wash out Valve for Irrigation Network - (RD-L-3)-Z7-L03-IRR | 2d | 2027-05-09 | 2027-05-10 | RHD4CZ7L03IRR2301 | -76d |
| RHD4CZ7L03IRR3202 |  | Stem and Service box for Wash out Valve for Irrigation Network - (RD-L-3)-Z7-L03-IRR | 2d | 2027-07-05 | 2027-07-06 | RHD4CZ7L03IRR3102, RHD4CZ7L03IRR2401, RHD4CZ7L03PT3200, RHD4CZ7L015SW2500 | -80d |
|  | 6518 | **RHD4-02-002-Z7-L03-Medium Voltage Network - MV** |  | 2027-03-06 | 2027-09-13 |  |  |
|  | 6519 | **RHD4-02-002-L03-(MV)-Medium Voltage cable trench** |  | 2027-07-06 | 2027-08-26 |  |  |
| RHD4CZ7L03MV1100 |  | Excavation for Medium Voltage Trench - (RD-L-3)-Z7-L03-MV | 15d | 2027-07-06 | 2027-07-24 | RHD4ENSDZ7APPMV150, RHD4CZ7L03RD3100, RHD4CZ8A011MV1100 | -150.02d |
| RHD4CZ7L03MV1200 |  | Trench Backfilling for Medium Voltage Network - (RD-L-3)-Z7-L03-MV | 15d | 2027-08-09 | 2027-08-26 | RHD4CZ7L03MV3200, RHD4CZ7L03MV3101 | -150.02d |
|  | 6520 | **RHD4-02-002-L03-(MV)-Medium Voltage duct banks** |  | 2027-03-06 | 2027-03-22 |  |  |
| RHD4CZ7L03MV2100 |  | Excavation of Duct Banks for Medium Voltage Network - (RD-L-3)-Z7-L03-MV | 3d | 2027-03-06 | 2027-03-08 | RHD4ENSDZ7APPMV150, RHD4CZ7L03RD3100 | -157d |
| RHD4CZ7L03MV2200 |  | Installation of Duct Banks for Medium Voltage Network - (RD-L-3)-Z7-L03-MV | 4d | 2027-03-13 | 2027-03-16 | RHD4PRSHLDOSMV1000, RHD4PRSHLSTAGMV1000, RHD4CZ7L03MV2100 | -157d |
| RHD4CZ7L03MV2300 |  | Pouring of Duct Banks for Medium Voltage Network - (RD-L-3)-Z7-L03-MV | 3d | 2027-03-17 | 2027-03-20 | RHD4CZ7L03MV2200 | -157d |
| RHD4CZ7L03MV2400 |  | Backfilling of Duct Banks for Medium Voltage Network - (RD-L-3)-Z7-L03-MV | 2d | 2027-03-21 | 2027-03-22 | RHD4CZ7L03MV2300 | -157d |
|  | 6521 | **RHD4-02-002-L03-(MV)-Medium Voltage cables 3Cx 500 mm²** |  | 2027-07-24 | 2027-09-13 |  |  |
| RHD4CZ7L03MV3100 |  | Installation of Medium Voltage Cables 3Cx 500 mm² - (RD-L-3)-Z7-L03-MV | 10d | 2027-07-24 | 2027-08-04 | RHD4PRSHLDOSMV1100, RHD4ENMSMV2000, RHD4ENMSMV2010, RHD4PRSHLSTAGMV1100, RHD4CZ7L03MV1100 | -150.02d |
| RHD4CZ7L03MV3200 |  | Joints Installation of Medium Voltage Cables 3Cx 500 mm² - (RD-L-3)-Z7-L03-MV | 4d | 2027-08-04 | 2027-08-09 | RHD4PRSHLDOSMV1300, RHD4PRSHLSTAGMV1300, RHD4CZ7L03MV3100 | -150.02d |
| RHD4CZ7L03MV3300 |  | Testing of Medium Voltage Cables 3Cx 500 mm² - (RD-L-3)-Z7-L03-MV | 10d | 2027-08-26 | 2027-09-07 | RHD4CZ7L03MV3200, RHD4CZ7L03MV1200, RHD4CZ7L03MV4200 | -122.02d |
| RHD4CZ7L03MV3400 |  | Termination of Medium Voltage Cables 3Cx 500 mm² - (RD-L-3)-Z7-L03-MV | 2d | 2027-09-11 | 2027-09-13 | RHD4CZ7L03MV3300, RHD4CZ7L03MV5400 | -125.02d |
|  | 6522 | **RHD4-02-002-L03-(MV)-Medium Voltage cables 3Cx 50 mm²** |  | 2027-07-24 | 2027-09-13 |  |  |
| RHD4CZ7L03MV3101 |  | Installation of Medium Voltage Cables 3Cx 50 mm² - (RD-L-3)-Z7-L03-MV | 2d | 2027-07-24 | 2027-07-26 | RHD4PRSHLDOSMV1200, RHD4ENMSMV2000, RHD4ENMSMV2010, RHD4PRSHLSTAGMV1200, RHD4CZ7L03MV1100 | -138.02d |
| RHD4CZ7L03MV3301 |  | Testing of Medium Voltage Cables 3Cx 50 mm² - (RD-L-3)-Z7-L03-MV | 2d | 2027-07-26 | 2027-07-28 | RHD4CZ7L03MV3101 | -87.02d |
| RHD4CZ7L03MV3401 |  | Termination of Medium Voltage Cables 3Cx 50 mm² - (RD-L-3)-Z7-L03-MV | 2d | 2027-09-11 | 2027-09-13 | RHD4CZ7L03MV3301, RHD4CZ7L03MV5400 | -125.02d |
|  | 6523 | **RHD4-02-002-L03-(MV)-Normally open Point (Outdoor Type)** |  | 2027-08-02 | 2027-08-07 |  |  |
| RHD4CZ7L03MV4100 |  | Installation for Normally open Point - (RD-L-3)-Z7-L03-MV | 2d | 2027-08-02 | 2027-08-04 | RHD4PRSHLDOSMV1400, RHD4PRSHLSTAGMV1400, RHD4CZ7L03MV3101 SS, RHD4CZ7L03MV3100 FF | -108.02d |
| RHD4CZ7L03MV4200 |  | Termination for Normally open Point - (RD-L-3)-Z7-L03-MV | 2d | 2027-08-04 | 2027-08-07 | RHD4CZ7L03MV4100 | -108.02d |
|  | 6524 | **RHD4-02-002-L03-(MV)-Unit Substations** |  | 2027-08-26 | 2027-09-11 |  |  |
| RHD4CZ7L03MV5100 |  | Excavation for Unit Substations for Medium Voltage Network - (RD-L-3)-Z7-L03-MV | 2d | 2027-08-26 | 2027-08-29 | RHD4ENSDZ7APPMV150, RHD4CZ7L03MV1200, RHD4CZ7L03MV4200 | -125.02d |
| RHD4CZ7L03MV5200 |  | Concrete Base Placement for Unit Substations for Medium Voltage Network - (RD-L-3)-Z7-L03-MV | 2d | 2027-08-29 | 2027-08-31 | RHD4CZ7L03MV5100 | -125.02d |
| RHD4CZ7L03MV5300 |  | Installation for Fences and doors for Medium Voltage Network - (RD-L-3)-Z7-L03-MV | 5d | 2027-08-31 | 2027-09-06 | RHD4CZ7L03MV5200 | -125.02d |
| RHD4CZ7L03MV5400 |  | Installation for Unit Substations for Medium Voltage Network - (RD-L-3)-Z7-L03-MV | 4d | 2027-09-06 | 2027-09-11 | RHD4PRLOLSTAGMV1601, RHD4PRLOLSTAGMV1602, RHD4CZ7L03MV5300 | -125.02d |
|  | 6525 | **RHD4-02-002-Z7-L03-Low Voltage Network - LV** |  | 2027-03-30 | 2027-04-26 |  |  |
|  | 6526 | **RHD4-02-002-L03-(LV)-Low Voltage duct banks** |  |  |  |  |  |
|  | 6527 | **RHD4-02-002-L03-(LV)-Low Voltage Drawpit** |  | 2027-03-30 | 2027-04-03 |  |  |
| RHD4CZ7L03LV5100 |  | Excavation of Drawpit size 900x900x1000mm for Low Voltage Network - (RD-L-3)-Z7-L03-LV | 2d | 2027-03-30 | 2027-03-31 | RHD4ENSDZ7APPLV160, RHD4CZ7L03RD3100, RHD4CZ7L03ST1107 | -157d |
| RHD4CZ7L03LV5200 |  | Installation of Drawpit size 900x900x1000mm for Low Voltage Network - (RD-L-3)-Z7-L03-LV | 2d | 2027-04-01 | 2027-04-03 | RHD4PRSHLDOSLV1400, RHD4PRSHLSTAGLV1400, RHD4CZ7L03LV5100 | -157d |
|  | 6528 | **RHD4-02-002-L03-(LV)-Low Voltage cables** |  | 2027-04-04 | 2027-04-19 |  |  |

| ID | WBS | Task | Duration | Start | Finish | Predecessors | Total float |
| --- | --- | --- | --- | --- | --- | --- | --- |
| RHD4CZ7L03LV3100 |  | Excavation for Low Voltage Cables for Low Voltage Network - (RD-L-3)-Z7-L03-LV | 4d | 2027-04-04 | 2027-04-07 | RHD4ENSDZ7APPLV160, RHD4CZ7L03LV5200 | -157d |
| RHD4CZ7L03LV3200 |  | Cable Laying of Low Voltage Cables for Low Voltage Network - (RD-L-3)-Z7-L03-LV | 4d | 2027-04-08 | 2027-04-12 | RHD4PRSHLDOSLV1100, RHD4ENMSLV2000, RHD4ENMSLV2010, RHD4PRSHLSTAGLV1100, RHD4CZ7L03LV3100 | -157d |
| RHD4CZ7L03LV3300 |  | Warning tape and Backfill for Low Voltage Cables for Low Voltage Network - (RD-L-3)-Z7-L03-LV | 4d | 2027-04-13 | 2027-04-17 | RHD4CZ7L03LV3200 | -157d |
| RHD4CZ7L03LV3400 |  | Testing of Low Voltage Cables for Low Voltage Network - (RD-L-3)-Z7-L03-LV | 2d | 2027-04-18 | 2027-04-19 | RHD4CZ7L03LV3300 | -157d |
|  | 6529 | **RHD4-02-002-L03-(LV)-Low Voltage Distribution Pillars** |  | 2027-04-20 | 2027-04-26 |  |  |
| RHD4CZ7L03LV4100 |  | Leveling for Distribution Pillars for Low Voltage Network - (RD-L-3)-Z7-L03-LV | 2d | 2027-04-20 | 2027-04-21 | RHD4CZ7L03LV3400 | -157d |
| RHD4CZ7L03LV4200 |  | Lean Concrete for Distribution Pillars for Low Voltage Network - (RD-L-3)-Z7-L03-LV | 2d | 2027-04-22 | 2027-04-24 | RHD4CZ7L03LV4100 | -157d |
| RHD4CZ7L03LV4300 |  | Installation of Distribution Pillars for Low Voltage Network - (RD-L-3)-Z7-L03-LV | 2d | 2027-04-25 | 2027-04-26 | RHD4PRSHLDOSLV1200, RHD4PRSHLDOSLV1300, RHD4PRSHLSTAGLV1200, RHD4PRSHLSTAGLV1300, RHD4CZ7L03LV4200 | -157d |
|  | 6530 | **RHD4-02-002-L03-(LV)-Low Voltage Distribution Pillars Earthing** |  |  |  |  |  |
|  | 6531 | **RHD4-02-002-Z7-L03-Street Lighting Network - SL** |  | 2027-03-13 | 2027-07-17 |  |  |
|  | 6532 | **RHD4-02-002-L03-(SL)-Street Lighting duct banks** |  | 2027-03-13 | 2027-03-21 |  |  |
| RHD4CZ7L03SL2100 |  | Excavation of Duct Banks for Street Lighting Network - (RD-L-3)-Z7-L03-SL | 2d | 2027-03-13 | 2027-03-14 | RHD4ENSDZ7APPSL170, RHD4CZ7L03MV2100 | -156d |
| RHD4CZ7L03SL2200 |  | Installation of Duct Banks for Street Lighting Network - (RD-L-3)-Z7-L03-SL | 2d | 2027-03-15 | 2027-03-16 | RHD4PRSHLDOSSL1000, RHD4PRSHLSTAGSL1000, RHD4CZ7L03SL2100 | -156d |
| RHD4CZ7L03SL2300 |  | Pouring of Duct Banks for Street Lighting Network - (RD-L-3)-Z7-L03-SL | 2d | 2027-03-17 | 2027-03-18 | RHD4CZ7L03SL2200 | -156d |
| RHD4CZ7L03SL2400 |  | Backfilling of Duct Banks for Street Lighting Network - (RD-L-3)-Z7-L03-SL | 2d | 2027-03-20 | 2027-03-21 | RHD4CZ7L03SL2300 | -156d |
|  | 6533 | **RHD4-02-002-L03-(SL)-Street Lighting Drawpit** |  | 2027-04-27 | 2027-05-01 |  |  |
| RHD4CZ7L03SL5100 |  | Excavation of Drawpit size 600x600x900mm for Street Lighting Network - (RD-L-3)-Z7-L03-SL | 2d | 2027-04-27 | 2027-04-28 | RHD4ENSDZ7APPSL170, RHD4CZ7L03ST1502, RHD4CZ7L03SL2300, RHD4CZ7L03LV4300 | -157d |
| RHD4CZ7L03SL5200 |  | Installation of Drawpit size 600x600x900mm for Street Lighting Network - (RD-L-3)-Z7-L03-SL | 2d | 2027-04-29 | 2027-05-01 | RHD4PRSHLDOSSL1400, RHD4PRSHLSTAGSL1400, RHD4CZ7L03SL5100 | -157d |
|  | 6534 | **RHD4-02-002-L03-(SL)-Street Lighting cables** |  | 2027-05-02 | 2027-06-13 |  |  |
| RHD4CZ7L03SL3100 |  | Excavation for Street Lighting Cables for Street Lighting Network - (RD-L-3)-Z7-L03-SL | 10d | 2027-05-02 | 2027-05-12 | RHD4ENSDZ7APPSL170, RHD4CZ7L03SL5200 | -157d |
| RHD4CZ7L03SL3200 |  | Cable Laying of Street Lighting Cables for Street Lighting Network - (RD-L-3)-Z7-L03-SL | 9d | 2027-05-13 | 2027-05-27 | RHD4PRSHLDOSSL1100, RHD4ENMSSL2000, RHD4ENMSSL2010, RHD4PRSHLSTAGSL1100, RHD4CZ7L03SL3100 | -157d |
| RHD4CZ7L03SL3300 |  | Warning tape and Backfill for Street Lighting Cables for Street Lighting Network - (RD-L-3)-Z7-L03-SL | 9d | 2027-05-29 | 2027-06-07 | RHD4CZ7L03SL3200 | -157d |
| RHD4CZ7L03SL3400 |  | Testing of Street Lighting Cables for Street Lighting Network - (RD-L-3)-Z7-L03-SL | 5d | 2027-06-08 | 2027-06-13 | RHD4CZ7L03SL3300 | -157d |
|  | 6535 | **RHD4-02-002-L03-(SL)-Street Lighting Poles** |  | 2027-06-14 | 2027-07-17 |  |  |
| RHD4CZ7L03SL1100 |  | Excavation for RC Base for Lighting Poles for Street Lighting Network - (RD-L-3)-Z7-L03-SL | 5d | 2027-06-14 | 2027-06-19 | RHD4ENSDZ7APPSL170, RHD4CZ7L03SL3400 | -157d |
| RHD4CZ7L03SL1200 |  | Installation for RC Base for Lighting Poles for Street Lighting Network - (RD-L-3)-Z7-L03-SL | 5d | 2027-06-20 | 2027-06-24 | RHD4CZ7L03SL1100 | -157d |
| RHD4CZ7L03SL1300 |  | Backfill for RC Base for Lighting Poles for Street Lighting Network - (RD-L-3)-Z7-L03-SL | 5d | 2027-06-26 | 2027-06-30 | RHD4CZ7L03SL1200 | -157d |
| RHD4CZ7L03SL1400 |  | Installation for Lighting Poles for Street Lighting Network - (RD-L-3)-Z7-L03-SL | 7d | 2027-07-01 | 2027-07-08 | RHD4PRSHLDOSSL1200, RHD4ENMSSL2000, RHD4ENMSSL2010, RHD4PRSHLSTAGSL1200, RHD4CZ7L03SL1300, RHD4CZ7L03SL3400 | -157d |
| RHD4CZ7L03SL1500 |  | Luminaire Installation for Lighting Poles for Street Lighting Network - (RD-L-3)-Z7-L03-SL | 5d | 2027-07-12 | 2027-07-17 | RHD4PRSHLDOSSL1300, RHD4PRSHLSTAGSL1300, RHD4CZ7L03SL1400, RHD4CZ7L03SL6100 | -157d |
|  | 6537 | **RHD4-02-002-L03-(SL)-Street Lighting Earthing System** |  | 2027-07-10 | 2027-07-11 |  |  |
| RHD4CZ7L03SL6100 |  | Installation of Earthing for Lighting Poles and Fedder Pillers for Street Lighting Network - (RD-L-3)-Z7-L03-SL | 2d | 2027-07-10 | 2027-07-11 | RHD4ENMSER2000, RHD4ENMSER2010, RHD4CZ7L03SL1400 | -157d |
|  | 5023 | **RHD4-02-002-L03-(SL)-Street Lighting Feeder Pillars** |  |  |  |  |  |
|  | 6543 | **RHD4-02-002-Z7-L03-Telecommunications Network - TC** |  | 2027-02-09 | 2027-08-28 |  |  |
|  | 6544 | **RHD4-02-002-L03-(TC)-Telecommunications Ducts** |  | 2027-07-18 | 2027-08-28 |  |  |
| RHD4CZ7L03TC2100 |  | Excavation of HDPE Ducts for Telecom Network - (RD-L-3)-Z7-L03-TC | 12d | 2027-07-18 | 2027-07-31 | RHD4ENSDZ7APPTC190, RHD4CZ7L03TC3400, RHD4CZ7L03SL1500 | -157d |
| RHD4CZ7L03TC2200 |  | Installation of HDPE Ducts for Telecom Network - (RD-L-3)-Z7-L03-TC | 7d | 2027-08-01 | 2027-08-08 | RHD4PRSHLDOSTC1000, RHD4PRSHLSTAGTC1000, RHD4CZ7L03TC2100 | -152d |
| RHD4CZ7L03TC2400 |  | Backfilling of HDPE Ducts for Telecom Network - (RD-L-3)-Z7-L03-TC | 12d | 2027-08-15 | 2027-08-28 | RHD4CZ7L03TC2200, RHD4CZ7L03TC5200 | -157d |
|  | 6545 | **RHD4-02-002-L03-(TC)-Telecommunications Manholes** |  | 2027-08-01 | 2027-08-14 |  |  |
| RHD4CZ7L03TC5100 |  | Excavation for Manholes for Telecom Network - (RD-L-3)-Z7-L03-TC | 6d | 2027-08-01 | 2027-08-07 | RHD4ENSDZ7APPTC190, RHD4CZ7L03TC2100 | -157d |
| RHD4CZ7L03TC5200 |  | Installation of Manholes for Telecom Network - (RD-L-3)-Z7-L03-TC | 6d | 2027-08-08 | 2027-08-14 | RHD4PRSHLDOSTC1200, RHD4PRSHLSTAGTC1200, RHD4CZ7L03TC5100, RHD4CZ7L03TC2200 SS | -157d |
|  | 6546 | **RHD4-02-002-L03-(TC)-Telecomminications Road Crossings** |  | 2027-02-09 | 2027-02-21 |  |  |
| RHD4CZ7L03TC3100 |  | Excavation for Road Crossings for Telecom Network - (RD-L-3)-Z7-L03-TC | 2d | 2027-02-09 | 2027-02-11 | RHD4ENSDZ7APPTC190, RHD4CZ7L03ST1108 | -165.02d |
| RHD4CZ7L03TC3200 |  | Installation of Road Crossings for Telecom Network - (RD-L-3)-Z7-L03-TC | 3d | 2027-02-11 | 2027-02-15 | RHD4PRSHLDOSTC1100, RHD4PRSHLSTAGTC1100, RHD4CZ7L03TC3100 | -165.02d |
| RHD4CZ7L03TC3300 |  | Pouring of Road Crossings for Telecom Network - (RD-L-3)-Z7-L03-TC | 3d | 2027-02-15 | 2027-02-18 | RHD4CZ7L03TC3200 | -165.02d |
| RHD4CZ7L03TC3400 |  | Backfilling of Road Crossings for Telecom Network - (RD-L-3)-Z7-L03-TC | 2d | 2027-02-18 | 2027-02-21 | RHD4CZ7L03TC3300 | -165.02d |
|  | 6547 | **RHD4-02-002-Z7-L03-Information and Communication Technologies - ICT** |  | 2027-02-09 | 2027-10-20 |  |  |
|  | 6548 | **RHD4-02-002-L03-(ICT)-Information and Communication Technologies Ducts** |  | 2027-08-29 | 2027-10-20 |  |  |
| RHD4CZ7L03ICT2100 |  | Excavation of HDPE Ducts for ICT Network - (RD-L-3)-Z7-L03-ICT | 13d | 2027-08-29 | 2027-09-12 | RHD4ENSDZ7APPICT200, RHD4CZ7L03ICT3400, RHD4CZ7L03TC2400 | -157d |
| RHD4CZ7L03ICT2200 |  | Installation of HDPE Ducts for ICT Network - (RD-L-3)-Z7-L03-ICT | 19d | 2027-09-13 | 2027-10-05 | RHD4PRSHLDOSICT1000, RHD4PRSHLSTAGICT1000, RHD4CZ7L03ICT2100 | -157d |
| RHD4CZ7L03ICT2400 |  | Backfilling of HDPE Ducts for ICT Network - (RD-L-3)-Z7-L03-ICT | 13d | 2027-10-06 | 2027-10-20 | RHD4CZ7L03ICT2200, RHD4CZ7L03ICT5200 | -157d |
|  | 6549 | **RHD4-02-002-L03-(ICT)-Information and Communication Technologies Manholes** |  | 2027-09-13 | 2027-09-29 |  |  |
| RHD4CZ7L03ICT5100 |  | Excavation for Manholes for ICT Network - (RD-L-3)-Z7-L03-ICT | 7d | 2027-09-13 | 2027-09-20 | RHD4ENSDZ7APPICT200, RHD4CZ7L03ICT2100 | -152d |
| RHD4CZ7L03ICT5200 |  | Installation of Manholes for ICT Network - (RD-L-3)-Z7-L03-ICT | 7d | 2027-09-21 | 2027-09-29 | RHD4PRSHLDOSICT1200, RHD4PRSHLSTAGICT1200, RHD4CZ7L03ICT5100 | -152d |
|  | 6550 | **RHD4-02-002-L03-(ICT)-Information and Communication Technologies Road Crossings** |  | 2027-02-09 | 2027-02-23 |  |  |
| RHD4CZ7L03ICT3100 |  | Excavation for Road Crossings for ICT Network - (RD-L-3)-Z7-L03-ICT | 2d | 2027-02-09 | 2027-02-11 | RHD4ENSDZ7APPICT200, RHD4CZ7L03ST1108 | -165.02d |
| RHD4CZ7L03ICT3200 |  | Installation of Road Crossings for ICT Network - (RD-L-3)-Z7-L03-ICT | 3d | 2027-02-14 | 2027-02-16 | RHD4PRSHLDOSICT1100, RHD4PRSHLSTAGICT1100, RHD4CZ7L03ICT3100 | -167d |
| RHD4CZ7L03ICT3300 |  | Pouring of Road Crossings for ICT Network - (RD-L-3)-Z7-L03-ICT | 3d | 2027-02-17 | 2027-02-20 | RHD4CZ7L03ICT3200 | -167d |
| RHD4CZ7L03ICT3400 |  | Backfilling of Road Crossings for ICT Network - (RD-L-3)-Z7-L03-ICT | 2d | 2027-02-21 | 2027-02-23 | RHD4CZ7L03ICT3300 | -167d |
|  | 6538 | **RHD4-02-002-Z7-L03-Landscape Network - LS** |  |  |  |  |  |
|  | 6539 | **RHD4-02-002-L03-(LS)-Landscape Lighting cables** |  |  |  |  |  |
|  | 6541 | **RHD4-02-002-L03-(LS)-Landscape Bollard Poles** |  |  |  |  |  |
|  | 6551 | **RHD4-02-002-Z7-L03-Security Network - CCTV** |  | 2027-10-21 | 2027-11-18 |  |  |
|  | 6552 | **RHD4-02-002-L03-(CCTV)-Civil Works** |  | 2027-10-21 | 2027-10-26 |  |  |
| RHD4CZ7L03CCTV2100 |  | Civil Works for Security Network - (RD-L-3)-Z7-L03-CCTV | 5d | 2027-10-21 | 2027-10-26 | RHD4CZ7L03ICT2400, RHD4CZ7L03TC2400, RHD4CZ7L03MV3401, RHD4CZ7L03MV3400 | -157d |
|  | 6553 | **RHD4-02-002-L03-(CCTV)-CCTV Poles** |  | 2027-10-27 | 2027-11-07 |  |  |
| RHD4CZ7L03CCTV1100 |  | Excavation for RC Base for CCTV Poles for Security Network - (RD-L-3)-Z7-L03-CCTV | 2d | 2027-10-27 | 2027-10-28 | RHD4ENSDZ7APPCCTV210, RHD4CZ7L03CCTV2100 | -157d |
| RHD4CZ7L03CCTV1200 |  | Installation for RC Base for CCTV Poles for Security Network - (RD-L-3)-Z7-L03-CCTV | 2d | 2027-10-30 | 2027-10-31 | RHD4CZ7L03CCTV1100 | -157d |
| RHD4CZ7L03CCTV1300 |  | Backfill for RC Base for CCTV Poles for Security Network - (RD-L-3)-Z7-L03-CCTV | 2d | 2027-11-01 | 2027-11-02 | RHD4CZ7L03CCTV1200 | -157d |
| RHD4CZ7L03CCTV1400 |  | Installation for CCTV Poles for Security Network - (RD-L-3)-Z7-L03-CCTV | 2d | 2027-11-03 | 2027-11-04 | RHD4PRSHLDOSCCTV1000, RHD4PRSHLSTACCTV1000, RHD4CZ7L03CCTV1300 | -157d |
| RHD4CZ7L03CCTV1500 |  | Protection post Installation for CCTV Poles for Security Network - (RD-L-3)-Z7-L03-CCTV | 2d | 2027-11-06 | 2027-11-07 | RHD4CZ7L03CCTV1400 | -157d |

| ID | WBS | Task | Duration | Start | Finish | Predecessors | Complete | Total float |
| --- | --- | --- | --- | --- | --- | --- | --- | --- |
|  | 6554 | **RHD4-02-002-L03-(CCTV)-Camera** |  | 2027-11-08 | 2027-11-09 |  |  |  |
| RHD4CZ7L03CCTV3100 |  | Installation for Cameras for Security Network - (RD-L-3)-Z7-L03-CCTV | 2d | 2027-11-08 | 2027-11-09 | RHD4PRSHLDOSCCTV1100, RHD4PRSHLSTACCTV1100, RHD4CZ7L03CCTV1400, RHD4CZ7L03CCTV4100 |  | -155d |
|  | 6555 | **RHD4-02-002-L03-(CCTV)-Power and Infrastructure** |  | 2027-11-06 | 2027-11-09 |  |  |  |
| RHD4CZ7L03CCTV4100 |  | Installation of Power outlet, UPS and midspan for PTZ Camerafor Cameras for Security Network - (RD-L-3)-Z7-L03-CCTV | 2d | 2027-11-06 | 2027-11-07 | RHD4PRSHLDOSCCTV1300, RHD4PRSHLSTACCTV1300, RHD4CZ7L03CCTV1400 |  | -155d |
| RHD4CZ7L03CCTV4200 |  | Short Range Wireless PoP wireless Bridgefor CCTV Poles for Security Network - (RD-L-3)-Z7-L03-CCTV | 2d | 2027-11-08 | 2027-11-09 | RHD4CZ7L03CCTV4100 |  | -155d |
|  | 6557 | **RHD4-02-002-L03-(CCTV)-CCTV Panels and Components** |  | 2027-11-10 | 2027-11-18 |  |  |  |
| RHD4CZ7L03CCTV6100 |  | Installation for CCTV Panels for Security Network - (RD-L-3)-Z7-L03-CCTV | 8d | 2027-11-10 | 2027-11-18 | RHD4PRSHLDOSCCTV1200, RHD4PRSHLSTACCTV1200, RHD4PRLOLSTACCTV1001, RHD4CZ7L03CCTV4200, RHD4CZ7L03CCTV3100 |  | -155d |
|  | 6757 | **RHD4-02-002-Z7-L131** |  | 2026-10-01 | 2028-01-22 |  |  |  |
|  | 6788 | **RHD4-02-002-Z7-L131-Crossings Sewage Network - SWCr** |  |  |  |  |  |  |
|  | 6800 | **RHD4-02-002-L131-(SWCr)-MH Works - 1500 mm diameter** |  |  |  |  |  |  |
|  | 6798 | **RHD4-02-002-L131-(SWCr)-MH Works - 1200 mm diameter** |  |  |  |  |  |  |
|  | 6801 | **RHD4-02-002-L131-(SWCr)-MH Works - 1500 mm diameter with Back drop** |  |  |  |  |  |  |
|  | 6793 | **RHD4-02-002-L131-(SWCr)-GRP Pipes - 700 mm diameter** |  |  |  |  |  |  |
|  | 6794 | **RHD4-02-002-L131-(SWCr)-UPVC Pipes - 200 mm diameter** |  |  |  |  |  |  |
|  | 6832 | **RHD4-02-002-Z7-L131-Crossings Potable Network - PTCr** |  |  |  |  |  |  |
|  | 6833 | **RHD4-02-002-L131-(PTCr)-HDPE Pipes - 110 mm diameter** |  |  |  |  |  |  |
|  | 6834 | **RHD4-02-002-L131-(PTCr)-HDPE Pipes - 160 mm diameter** |  |  |  |  |  |  |
|  | 6838 | **RHD4-02-002-L131-(PTCr)-Gate Valves (Direct Buried)** |  |  |  |  |  |  |
|  | 6845 | **RHD4-02-002-L131-(PTCr)-Fire Hydrant** |  |  |  |  |  |  |
|  | 6879 | **RHD4-02-002-Z7-L131-Crossings Irrigation Network - IRRC** |  |  |  |  |  |  |
|  | 6880 | **RHD4-02-002-L131-(IRRC)-HDPE Pipes - 160 mm diameter** |  |  |  |  |  |  |
|  | 6881 | **RHD4-02-002-L131-(IRRC)-HDPE Pipes - 180 mm diameter** |  |  |  |  |  |  |
|  | 6888 | **RHD4-02-002-L131-(IRRC)-Gate Valves (Direct Buried)** |  |  |  |  |  |  |
|  | 6891 | **RHD4-02-002-L131-(IRRC)-Wash out Chamber** |  |  |  |  |  |  |
|  | 6892 | **RHD4-02-002-L131-(IRRC)-Wash out Valves** |  |  |  |  |  |  |
|  | 6936 | **RHD4-02-002-Z7-L131-Road Works - RD** |  | 2027-02-14 | 2028-01-19 |  |  |  |
|  | 6937 | **RHD4-02-002-L131-(RD)-Subgrade** |  | 2027-02-14 | 2027-02-23 |  |  |  |
| RHD4CZ7L131RD1100 |  | Supply, lay and compaction subgrade compacted thickness 300 mm for Roads - (RD-L-13/1)-Z7-L131-RD | 7d | 2027-02-14 | 2027-02-23 | RHD4ENSDZ7APPEW100, RHD4ENSDZ7APPRD220, RHD4CZ7L131ST1505 |  | -183.02d |
|  | 6938 | **RHD4-02-002-L131-(RD)-Aggregate Base Course** |  | 2027-02-23 | 2027-03-02 |  |  |  |
| RHD4CZ7L131RD2100 |  | Supply, lay and compaction Aggregate base course compacted thickness 300 mmfor Roads - (RD-L-13/1)-Z7-L131-RD | 6d | 2027-02-23 | 2027-03-02 | RHD4PRSHLDOSRD1000, RHD4PRSHLSTAGRD1000, RHD4CZ7L131RD1100 |  | -183.02d |
|  | 6939 | **RHD4-02-002-L131-(RD)-Bituminous base course Two Layers, including (MC1)&(RC2)** |  | 2027-03-02 | 2027-11-23 |  |  |  |
| RHD4CZ7L131RD3100 |  | Supply, lay and Asphaltic base course including Prime Coat (MC1) for 1st Layer - (RD-L-13/1)-Z7-L131-RD | 2d | 2027-03-02 | 2027-03-04 | RHD4PRSHLDOSRD1100, RHD4ENMSASPH2000, RHD4ENMSASPH2010, RHD4PRSHLSTAGRD1100, RHD4CZ7L131RD2100 |  | -183.02d |
| RHD4CZ7L131RD3200 |  | Supply, lay and Asphaltic base course including Tack Coat (RC2) for 2nd Layer - (RD-L-13/1)-Z7-L131-RD | 2d | 2027-11-22 | 2027-11-23 | RHD4PRSHLDOSRD1100, RHD4PRSHLSTAGRD1100, RHD4CZ7L131RD3100, RHD4CZ7L03RD3200 |  | -141d |
|  | 6941 | **RHD4-02-002-L131-(RD)-Precast Concrete Curb** |  | 2027-12-02 | 2027-12-08 |  |  |  |
| RHD4CZ7L131RD5100 |  | Supply and installation Precast Concrete Kerb for Roads - (RD-L-13/1)-Z7-L131-RD | 6d | 2027-12-02 | 2027-12-08 | RHD4PRSHLDOSRD1200, RHD4ENMSRD2000, RHD4ENMSRD2010, RHD4PRSHLSTAGRD1200, RHD4CZ7L131RD3200, RHD4CZ7L03RD5100 |  | -130d |
|  | 6944 | **RHD4-02-002-L131-(RD)-Traffic Signage** |  | 2027-12-23 | 2027-12-30 |  |  |  |
| RHD4CZ7L131RD8100 |  | Installation of Traffic Signage for Road Network - (RD-L-13/1)-Z7-L131-RD | 6d | 2027-12-23 | 2027-12-30 | RHD4PRSHLDOSRD1600, RHD4PRSHLSTAGRD1600, RHD4CZ7L131RD5100, RHD4CZ7L131TC2400, RHD4CZ7L131ICT2400, RHD4CZ7L03RD8100 |  | -142.02d |
|  | 6942 | **RHD4-02-002-L131-(RD)-Precast Interlocking Block Pavers** |  | 2027-12-30 | 2028-01-05 |  |  |  |
| RHD4CZ7L131RD6100 |  | Interlocking block pavers for sidewalk-footpath for Side walks and Parking areas - (RD-L-13/1)-Z7-L131-RD | 5d | 2027-12-30 | 2028-01-05 | RHD4PRSHLDOSRD1300, RHD4PRSHLDOSRD1400, RHD4ENMSRD2000, RHD4ENMSRD2010, RHD4PRSHLSTAGRD1300, RHD4PRSHLSTAGRD1400, RHD4CZ7L131RD8100, RHD4CZ7L03RD6100 |  | -142.02d |
|  | 6940 | **RHD4-02-002-L131-(RD)-Bituminous concrete wearing course including tack coat (RC2)** |  | 2028-01-12 | 2028-01-15 |  |  |  |
| RHD4CZ7L131RD4100 |  | Supply, lay and compaction Asphaltic wearing course including tack Coat (RC2)for Road Network - (RD-L-13/1)-Z7-L131-RD | 2d | 2028-01-12 | 2028-01-15 | RHD4CZ7L131RD5100, RHD4CZ7L131RD6100, RHD4CZ7L03RD4100, RHD4CZ7L131CTV4200 |  | -148.02d |
|  | 6943 | **RHD4-02-002-L131-(RD)-Pavement Marking** |  | 2028-01-15 | 2028-01-19 |  |  |  |
| RHD4CZ7L131RD7100 |  | Pavement Markings for Road Network - (RD-L-13/1)-Z7-L131-RD | 4d | 2028-01-15 | 2028-01-19 | RHD4PRSHLDOSRD1500, RHD4PRSHLSTAGRD1500, RHD4CZ7L131RD4100 |  | -148.02d |
|  | 6761 | **RHD4-02-002-Z7-L131-Storm Network - ST** |  | 2026-10-01 | 2027-05-06 |  |  |  |
|  | 6779 | **RHD4-02-002-L131-(ST)-MH Works - 1500 mm diameter** |  | 2026-10-17 | 2027-05-06 |  |  |  |
| RHD4CZ7L131ST3101 |  | Excavation and PC Blinding works for MH 1500 mm - (RD-L-13/1)-Z7-L131-ST | 6d | 2026-10-17 A | 2026-10-24 A | RHD4ENSDZ7APPST110, RHD4ENMSST2000, RHD4CZ7L131ST2100 | 100% |  |
| RHD4CZ7L131ST3201 |  | Installation of Base for MH 1500 mm - (RD-L-13/1)-Z7-L131-ST | 6d | 2026-10-19 A | 2027-04-18 | RHD4PRSHLSTAGST1606, RHD4CZ7L131ST3101 | 42% | -98d |
| RHD4CZ7L131ST3301 |  | MH Ring and C.Slab works and Backfilling works for MH 1500 mm - (RD-L-13/1)-Z7-L131-ST | 6d | 2027-04-19 | 2027-04-25 | RHD4PRSHLDOSST1606, RHD4CZ7L131ST3201 |  | -98d |
| RHD4CZ7L131ST3401 |  | Steel Cover for MH 1500 mm - (RD-L-13/1)-Z7-L131-ST | 4d | 2027-04-26 | 2027-04-29 | RHD4PRSHLDOSST1706, RHD4PRSHLSTAGST1706, RHD4CZ7L131ST3301 |  | -98d |
| RHD4CZ7L131ST3501 |  | Finishing, Benching, Testing works for MH 1500 mm - (RD-L-13/1)-Z7-L131-ST | 6d | 2027-05-01 | 2027-05-06 | RHD4CZ7L131ST3401, RHD4CZ7L131ST2500 |  | -98d |
|  | 6008 | **RHD4-02-002-L131-(ST)-GRP Pipes - 600 mm diameter** |  | 2027-04-12 | 2027-04-22 |  |  |  |
| RHD4CZ7L131ST1102 |  | Excavation works for GRP Pipe Line 600 mm - (RD-L-13/1)-Z7-L131-ST | 2d | 2027-04-12 | 2027-04-13 | RHD4CZ7L131ST1103 |  | -111d |
| RHD4CZ7L131ST1202 |  | Bedding works for GRP Pipe Line 600 mm - (RD-L-13/1)-Z7-L131-ST | 2d | 2027-04-14 | 2027-04-15 | RHD4CZ7L131ST1102 |  | -74d |
| RHD4CZ7L131ST1302 |  | Installing for GRP Pipe Line 600 mm - (RD-L-13/1)-Z7-L131-ST | 2d | 2027-04-17 | 2027-04-18 | RHD4CZ7L131ST1202 |  | -74d |
| RHD4CZ7L131ST1402 |  | Primary Test for GRP Pipe Line 600 mm - (RD-L-13/1)-Z7-L131-ST | 2d | 2027-04-19 | 2027-04-20 | RHD4CZ7L131ST1302 |  | -74d |
| RHD4CZ7L131ST1502 |  | Backfilling and warning tape works for GRP Pipe Line 600 mm - (RD-L-13/1)-Z7-L131-ST | 2d | 2027-04-21 | 2027-04-22 | RHD4CZ7L131ST1402 |  | -74d |
|  | 6022 | **RHD4-02-002-L131-(ST)-MH Works - 1200 mm diameter** |  | 2026-10-24 | 2027-04-27 |  |  |  |
| RHD4CZ7L131ST3200 |  | Installation of Base for MH 1200 mm - (RD-L-13/1)-Z7-L131-ST | 2d | 2026-10-24 A | 2027-04-20 | RHD4CZ7L131ST3100 | 50% | -74d |
| RHD4CZ7L131ST3100 |  | Excavation and PC Blinding works for MH 1200 mm - (RD-L-13/1)-Z7-L131-ST | 2d | 2027-04-17 | 2027-04-18 | RHD4CZ7L131ST3101 SS |  | -105d |
| RHD4CZ7L131ST3300 |  | MH Ring and C.Slab works and Backfilling works for MH 1200 mm - (RD-L-13/1)-Z7-L131-ST | 2d | 2027-04-21 | 2027-04-22 | RHD4CZ7L131ST3200 |  | -74d |
| RHD4CZ7L131ST3400 |  | Steel Cover for MH 1200 mm - (RD-L-13/1)-Z7-L131-ST | 2d | 2027-04-24 | 2027-04-25 | RHD4CZ7L131ST3300 |  | -74d |
| RHD4CZ7L131ST3500 |  | Finishing, Benching, Testing works for MH 1200 mm - (RD-L-13/1)-Z7-L131-ST | 2d | 2027-04-26 | 2027-04-27 | RHD4CZ7L131ST3400, RHD4CZ7L131ST1503 |  | -74d |
|  | 6780 | **RHD4-02-002-L131-(ST)-MH Works - 2000 mm diameter** |  |  |  |  |  |  |
|  | 6770 | **RHD4-02-002-L131-(ST)-GRP Pipes - 1200 mm diameter** |  |  |  |  |  |  |
|  | 6769 | **RHD4-02-002-L131-(ST)-GRP Pipes - 1100 mm diameter** |  |  |  |  |  |  |
|  | 6767 | **RHD4-02-002-L131-(ST)-GRP Pipes - 900 mm diameter** |  | 2026-10-24 | 2027-02-14 |  |  |  |
| RHD4CZ7L131ST1105 |  | Excavation works for GRP Pipe Line 900 mm - (RD-L-13/1)-Z7-L131-ST | 2d | 2026-10-24 A | 2026-10-25 A | RHD4ENSDZ7APPST110, RHD4CZ7L131RW3000, RHD4CZ7L03ST1108 | 100% |  |
| RHD4CZ7L131ST1205 |  | Bedding works for GRP Pipe Line 900 mm - (RD-L-13/1)-Z7-L131-ST | 2d | 2026-11-01 A | 2026-11-02 A | RHD4CZ7L131ST1105 | 100% |  |
| RHD4CZ7L131ST1305 |  | Installing for GRP Pipe Line 900 mm - (RD-L-13/1)-Z7-L131-ST | 2d | 2026-11-03 A | 2026-11-04 A | RHD4PRSHLSTAGST1006, RHD4CZ7L131ST1205, RHD4PRSHLDOSST1606, RHD4PRSHLPOST1000, RHD4PRSHLDOSST1006, RHD4PRSHLDOSST1605, RHD4PRSHLDOSST1005 | 100% |  |
| RHD4CZ7L131ST1405 |  | Primary Test for GRP Pipe Line 900 mm - (RD-L-13/1)-Z7-L131-ST | 2d | 2027-02-09 | 2027-02-11 | RHD4CZ7L131ST1305 |  | -183.02d |

| ID | WBS | Task | Duration | Start | Finish | Predecessors | Complete | Total float |
| --- | --- | --- | --- | --- | --- | --- | --- | --- |
| RHD4CZ7L131ST1505 |  | Backfilling and warning tape works for GRP Pipe Line 900 mm - (RD-L-13/1)-Z7-L131-ST | 2d | 2027-02-11 | 2027-02-14 | RHD4CZ7L131ST1405 |  | -183.02d |
|  | 6766 | **RHD4-02-002-L131-(ST)-GRP Pipes - 800 mm diameter** |  | 2026-10-01 | 2027-04-20 |  |  |  |
| RHD4CZ7L131ST1104 |  | Excavation works for GRP Pipe Line 800 mm - (RD-L-13/1)-Z7-L131-ST | 3d | 2026-10-01 A | 2027-04-08 | RHD4ENSDZ7APPST110, RHD4CZ7L03ST1507 | 30% | -111d |
| RHD4CZ7L131ST1204 |  | Bedding works for GRP Pipe Line 800 mm - (RD-L-13/1)-Z7-L131-ST | 3d | 2026-11-01 A | 2027-04-12 | RHD4CZ7L131ST1104 | 30% | -98d |
| RHD4CZ7L131ST1304 |  | Installing for GRP Pipe Line 800 mm - (RD-L-13/1)-Z7-L131-ST | 2d | 2026-11-03 A | 2027-04-14 | RHD4PRSHLSTAGST1006, RHD4CZ7L131ST1204, RHD4CZ7L131ST1305, RHD4PRSHLDOSST1606, RHD4PRSHLPOST1000, RHD4PRSHLDOSST1006, RHD4PRSHLDOSST1605, RHD4PRSHLDOSST1005 | 30% | -98d |
| RHD4CZ7L131ST1504 |  | Backfilling and warning tape works for GRP Pipe Line 800 mm - (RD-L-13/1)-Z7-L131-ST | 3d | 2026-11-04 A | 2027-04-20 | RHD4CZ7L131ST1404, RHD4CZ7L131ST1505 | 20% | -98d |
| RHD4CZ7L131ST1404 |  | Primary Test for GRP Pipe Line 800 mm - (RD-L-13/1)-Z7-L131-ST | 2d | 2027-04-15 | 2027-04-17 | RHD4CZ7L131ST1304 |  | -98d |
|  | 6765 | **RHD4-02-002-L131-(ST)-GRP Pipes - 700 mm diameter** |  | 2026-10-24 | 2027-04-25 |  |  |  |
| RHD4CZ7L131ST1103 |  | Excavation works for GRP Pipe Line 700 mm - (RD-L-13/1)-Z7-L131-ST | 2d | 2026-10-24 A | 2027-04-11 | RHD4ENSDZ7APPST110, RHD4CZ7L131ST1104 | 30% | -111d |
| RHD4CZ7L131ST1203 |  | Bedding works for GRP Pipe Line 700 mm - (RD-L-13/1)-Z7-L131-ST | 2d | 2026-11-01 A | 2027-04-13 | RHD4CZ7L131ST1103 | 30% | -70d |
| RHD4CZ7L131ST1303 |  | Installing for GRP Pipe Line 700 mm - (RD-L-13/1)-Z7-L131-ST | 2d | 2026-11-03 A | 2027-04-17 | RHD4PRSHLSTAGST1006, RHD4CZ7L131ST1203, RHD4CZ7L131ST1304, RHD4PRSHLDOSST1606, RHD4PRSHLPOST1000, RHD4PRSHLDOSST1006, RHD4PRSHLDOSST1605, RHD4PRSHLDOSST1005 | 30% | -71d |
| RHD4CZ7L131ST1403 |  | Primary Test for GRP Pipe Line 700 mm - (RD-L-13/1)-Z7-L131-ST | 2d | 2027-04-18 | 2027-04-19 | RHD4CZ7L131ST1303 |  | -71d |
| RHD4CZ7L131ST1503 |  | Backfilling and warning tape works for GRP Pipe Line 700 mm - (RD-L-13/1)-Z7-L131-ST | 2d | 2027-04-24 | 2027-04-25 | RHD4CZ7L131ST1403, RHD4CZ7L131ST1504, RHD4CZ7L131ST1502 |  | -74d |
|  | 6777 | **RHD4-02-002-L131-(ST)-UPVC Pipes - 400 mm diameter** |  |  |  |  |  |  |
|  | 6776 | **RHD4-02-002-L131-(ST)-UPVC Pipes - 300 mm diameter** |  | 2026-11-02 | 2027-04-29 |  |  |  |
| RHD4CZ7L131ST2100 |  | Excavation works for UPVC Pipe Line 300 mm - (RD-L-13/1)-Z7-L131-ST | 2d | 2026-11-02 A | 2027-04-15 | RHD4ENSDZ7APPST110, RHD4CZ7L131ST1102 | 14% | -111d |
| RHD4CZ7L131ST2200 |  | Bedding works for UPVC Pipe Line 300 mm - (RD-L-13/1)-Z7-L131-ST | 2d | 2027-04-17 | 2027-04-18 | RHD4CZ7L131ST2100 |  | -94d |
| RHD4CZ7L131ST2300 |  | Installing for UPVC Pipe Line 300 mm - (RD-L-13/1)-Z7-L131-ST | 2d | 2027-04-24 | 2027-04-25 | RHD4PRSHLDOSST1106, RHD4PRSHLSTAGST1106, RHD4CZ7L131ST2200, RHD4CZ7L131ST7300 |  | -98d |
| RHD4CZ7L131ST2400 |  | Primary Test for UPVC Pipe Line 300 mm - (RD-L-13/1)-Z7-L131-ST | 2d | 2027-04-26 | 2027-04-27 | RHD4CZ7L131ST2300 |  | -98d |
| RHD4CZ7L131ST2500 |  | Backfilling and warning tape works for UPVC Pipe Line 300 mm - (RD-L-13/1)-Z7-L131-ST | 2d | 2027-04-28 | 2027-04-29 | RHD4CZ7L131ST2400, RHD4CZ7L131ST6100 |  | -98d |
|  | 6783 | **RHD4-02-002-L131-(ST)-HDPE Force Main Pipeline - 250 mm diameter** |  |  |  |  |  |  |
|  | 6781 | **RHD4-02-002-L131-(ST)-Discharge Chamber - 1500*1200 mm** |  |  |  |  |  |  |
|  | 6784 | **RHD4-02-002-L131-(ST)-Concrete Encasement** |  | 2027-04-24 | 2027-04-25 |  |  |  |
| RHD4CZ7L131ST6100 |  | Pipe Encasement for Storm Pipelines - (RD-L-13/1)-Z7-L131-ST | 2d | 2027-04-24 | 2027-04-25 | RHD4CZ7L131ST2300 SS, RHD4CZ7L131ST2300 FF, RHD4CZ7L131ST2200 |  | -96d |
|  | 6785 | **RHD4-02-002-Z7-L131-Catch Basin - ST** |  | 2027-04-17 | 2027-04-28 |  |  |  |
|  | 6786 | **RHD4-02-002-L131-(ST)-Single Catch Basin Works** |  | 2027-04-17 | 2027-04-28 |  |  |  |
| RHD4CZ7L131ST7100 |  | Excavation works for Single Catch Basin - (RD-L-13/1)-Z7-L131-ST | 2d | 2027-04-17 | 2027-04-18 | RHD4ENSDZ7APPST110, RHD4CZ7L131ST2100 |  | -111d |
| RHD4CZ7L131ST7200 |  | PC Blinding, Installation and Pipe connection for Single Catch Basin - (RD-L-13/1)-Z7-L131-ST | 2d | 2027-04-19 | 2027-04-20 | RHD4CZ7L131ST7100 |  | -111d |
| RHD4CZ7L131ST7300 |  | Rings & C.Slab & Final Backfill for Single Catch Basin - (RD-L-13/1)-Z7-L131-ST | 2d | 2027-04-21 | 2027-04-22 | RHD4PRSHLDOSST1306, RHD4PRSHLSTAGST1306, RHD4CZ7L131ST7200 |  | -111d |
| RHD4CZ7L131ST7400 |  | Steel Cover for Single Catch Basin - (RD-L-13/1)-Z7-L131-ST | 2d | 2027-04-24 | 2027-04-25 | RHD4PRSHLDOSST1706, RHD4CZ7L131ST7300 |  | -111d |
| RHD4CZ7L131ST7500 |  | Finishing and Insulation works for Single Catch Basin - (RD-L-13/1)-Z7-L131-ST | 3d | 2027-04-26 | 2027-04-28 | RHD4CZ7L131ST7400 |  | -111d |
|  | 6787 | **RHD4-02-002-L131-(ST)-Double Catch Basin Works** |  |  |  |  |  |  |
|  | 6810 | **RHD4-02-002-Z7-L131-Sewage Network - SW** |  | 2026-10-27 | 2027-06-22 |  |  |  |
|  | 6822 | **RHD4-02-002-L131-(SW)-MH Works - 1500 mm diameter** |  |  |  |  |  |  |
|  | 6442 | **RHD4-02-002-L131-(SW)-MH Works - 1200 mm diameter** |  | 2027-04-29 | 2027-06-22 |  |  |  |
| RHD4CZ7L131SW3100 |  | Excavation and PC Blinding works for MH 1200 mm - (RD-L-13/1)-Z7-L131-SW | 6d | 2027-04-29 | 2027-05-05 | RHD4CZ7L131SW1101 SS |  | -111d |
| RHD4CZ7L131SW3200 |  | Installation of Base for MH 1200 mm - (RD-L-13/1)-Z7-L131-SW | 11d | 2027-05-06 | 2027-05-23 | RHD4CZ7L131SW3100 |  | -109d |
| RHD4CZ7L131SW3300 |  | MH Ring and C.Slab works and Backfilling works for MH 1200 mm - (RD-L-13/1)-Z7-L131-SW | 11d | 2027-05-24 | 2027-06-05 | RHD4CZ7L131SW3200 |  | -109d |
| RHD4CZ7L131SW3400 |  | Steel Cover for MH 1200 mm - (RD-L-13/1)-Z7-L131-SW | 4d | 2027-06-06 | 2027-06-09 | RHD4CZ7L131SW3300 |  | -106d |
| RHD4CZ7L131SW3500 |  | Finishing, Benching, Testing works for MH 1200 mm - (RD-L-13/1)-Z7-L131-SW | 11d | 2027-06-10 | 2027-06-22 | RHD4CZ7L131SW3400, RHD4CZ7L131SW2500 |  | -106d |
|  | 957 | **RHD4-02-002-L131-(SW)-MH Works - 1200 mm diameter with Back drop** |  | 2027-05-06 | 2027-05-22 |  |  |  |
| RHD4CZ7L131SW3101 |  | Excavation and PC Blinding works for MH 1200 mm - (RD-L-13/1)-Z7-L131-SW | 2d | 2027-05-06 | 2027-05-08 | RHD4CZ7L131SW3100 |  | -111d |
| RHD4CZ7L131SW3201 |  | Installation of Base for MH 1200 mm - (RD-L-13/1)-Z7-L131-SW | 2d | 2027-05-09 | 2027-05-10 | RHD4CZ7L131SW3101 |  | -111d |
| RHD4CZ7L131SW3301 |  | MH Ring and C.Slab works and Backfilling works for MH 1200 mm - (RD-L-13/1)-Z7-L131-SW | 2d | 2027-05-11 | 2027-05-12 | RHD4CZ7L131SW3201 |  | -111d |
| RHD4CZ7L131SW3401 |  | Steel Cover for MH 1200 mm - (RD-L-13/1)-Z7-L131-SW | 2d | 2027-05-13 | 2027-05-19 | RHD4CZ7L131SW3301 |  | -111d |
| RHD4CZ7L131SW3501 |  | Finishing, Benching, Testing works for MH 1200 mm - (RD-L-13/1)-Z7-L131-SW | 2d | 2027-05-20 | 2027-05-22 | RHD4CZ7L131SW3401 |  | -111d |
|  | 6434 | **RHD4-02-002-L131-(SW)-GRP Pipes - 400 mm diameter** |  | 2026-10-27 | 2027-06-19 |  |  |  |
| RHD4CZ7L131SW1101 |  | Excavation works for GRP Pipe Line 400 mm - (RD-L-13/1)-Z7-L131-SW | 4d | 2026-10-27 A | 2026-10-29 A | RHD4CZ7L131ST7500 | 100% |  |
| RHD4CZ7L131SW1201 |  | Bedding works for GRP Pipe Line 400 mm - (RD-L-13/1)-Z7-L131-SW | 4d | 2026-10-29 A | 2027-05-03 | RHD4CZ7L131SW1101 | 43% | -97d |
| RHD4CZ7L131SW1301 |  | Installing for GRP Pipe Line 400 mm - (RD-L-13/1)-Z7-L131-SW | 4d | 2026-10-31 A | 2027-06-09 | RHD4CZ7L131SW1201, RHD4CZ7L131SW3300 | 29% | -109d |
| RHD4CZ7L131SW1401 |  | Primary Test for GRP Pipe Line 400 mm - (RD-L-13/1)-Z7-L131-SW | 4d | 2027-06-10 | 2027-06-14 | RHD4CZ7L131SW1301 |  | -109d |
| RHD4CZ7L131SW1501 |  | Backfilling and warning tape works for GRP Pipe Line 400 mm - (RD-L-13/1)-Z7-L131-SW | 4d | 2027-06-15 | 2027-06-19 | RHD4CZ7L131SW1401, RHD4CZ7L131SW2500, RHD4CZ7L131IRR3202 |  | -109d |
|  | 6438 | **RHD4-02-002-L131-(SW)-UPVC Pipes - 200 mm diameter** |  | 2027-04-29 | 2027-05-10 |  |  |  |
| RHD4CZ7L131SW2100 |  | Excavation works for UPVC Pipe Line 200 mm - (RD-L-13/1)-Z7-L131-SW | 2d | 2027-04-29 | 2027-05-01 | RHD4CZ7L131SW1101 |  | -84d |
| RHD4CZ7L131SW2200 |  | Bedding works for UPVC Pipe Line 200 mm - (RD-L-13/1)-Z7-L131-SW | 2d | 2027-05-02 | 2027-05-03 | RHD4CZ7L131SW2100 |  | -84d |
| RHD4CZ7L131SW2300 |  | Installing for UPVC Pipe Line 200 mm - (RD-L-13/1)-Z7-L131-SW | 2d | 2027-05-04 | 2027-05-05 | RHD4CZ7L131SW2200 |  | -84d |
| RHD4CZ7L131SW2400 |  | Primary Test for UPVC Pipe Line 200 mm - (RD-L-13/1)-Z7-L131-SW | 2d | 2027-05-06 | 2027-05-08 | RHD4CZ7L131SW2300 |  | -84d |
| RHD4CZ7L131SW2500 |  | Backfilling and warning tape works for UPVC Pipe Line 200 mm - (RD-L-13/1)-Z7-L131-SW | 2d | 2027-05-09 | 2027-05-10 | RHD4CZ7L131SW2400 |  | -84d |
|  | 6823 | **RHD4-02-002-L131-(SW)-MH Works - 1500 mm diameter with Back drop** |  |  |  |  |  |  |
|  | 6815 | **RHD4-02-002-L131-(SW)-GRP Pipes - 700 mm diameter** |  |  |  |  |  |  |
|  | 6819 | **RHD4-02-002-L131-(SW)-Concrete Encasement** |  |  |  |  |  |  |
|  | 6847 | **RHD4-02-002-Z7-L131-Potable Network - PT** |  | 2027-05-23 | 2027-07-12 |  |  |  |
|  | 6848 | **RHD4-02-002-L131-(PT)-HDPE Pipes - 110 mm diameter** |  | 2027-05-26 | 2027-06-23 |  |  |  |
| RHD4CZ7L131PT1100 |  | Excavation works for HDPE Pipline 110 mm - (RD-L-13/1)-Z7-L131-PT | 2d | 2027-05-26 | 2027-05-27 | RHD4ENSDZ7APPPT130, RHD4ENMSPT2000, RHD4CZ7L131PT1101 |  | -110d |
| RHD4CZ7L131PT1200 |  | Bedding works for HDPE Pipline 110 mm - (RD-L-13/1)-Z7-L131-PT | 2d | 2027-05-30 | 2027-05-31 | RHD4CZ7L131PT1100, RHD4CZ7L131PT1201 |  | -108d |
| RHD4CZ7L131PT1300 |  | Installing for HDPE Pipline 110 mm - (RD-L-13/1)-Z7-L131-PT | 2d | 2027-06-05 | 2027-06-06 | RHD4PRSHLDOSPT1000, RHD4PRSHLSTAGPT1000, RHD4CZ7L131PT1200, RHD4CZ7L131PT1301 |  | -111d |
| RHD4CZ7L131PT1400 |  | Primary Test for HDPE Pipline 110 mm - (RD-L-13/1)-Z7-L131-PT | 2d | 2027-06-17 | 2027-06-19 | RHD4CZ7L131PT1300, RHD4CZ7L131PT1401, RHD4CZ7L131PT5100 |  | -109d |
| RHD4CZ7L131PT1500 |  | Backfilling and warning tape works for HDPE Pipline 110 mm - (RD-L-13/1)-Z7-L131-PT | 2d | 2027-06-22 | 2027-06-23 | RHD4CZ7L131PT1400, RHD4CZ7L131PT1501 |  | -111d |
|  | 6849 | **RHD4-02-002-L131-(PT)-HDPE Pipes - 160 mm diameter** |  | 2027-05-23 | 2027-06-21 |  |  |  |
| RHD4CZ7L131PT1101 |  | Excavation works for HDPE Pipline 160 mm - (RD-L-13/1)-Z7-L131-PT | 3d | 2027-05-23 | 2027-05-25 | RHD4ENSDZ7APPPT130, RHD4ENMSPT2000, RHD4CZ7L131SW3501 |  | -111d |

| ID | WBS | Task | Duration | Start | Finish | Predecessors | Total float |
| --- | --- | --- | --- | --- | --- | --- | --- |
| RHD4CZ7L131PT1201 |  | Bedding works for HDPE Pipline 160 mm - (RD-L-13/1)-Z7-L131-PT | 3d | 2027-05-26 | 2027-05-29 | RHD4CZ7L131PT1101 | -111d |
| RHD4CZ7L131PT1301 |  | Installing for HDPE Pipline 160 mm - (RD-L-13/1)-Z7-L131-PT | 5d | 2027-05-30 | 2027-06-03 | RHD4PRSHLDOSPT1000, RHD4PRSHLSTAGPT1000, RHD4CZ7L131PT1201 | -111d |
| RHD4CZ7L131PT1401 |  | Primary Test for HDPE Pipline 160 mm - (RD-L-13/1)-Z7-L131-PT | 2d | 2027-06-15 | 2027-06-16 | RHD4CZ7L131PT1301, RHD4CZ7L131PT5100 | -111d |
| RHD4CZ7L131PT1501 |  | Backfilling and warning tape works for HDPE Pipline 160 mm - (RD-L-13/1)-Z7-L131-PT | 4d | 2027-06-17 | 2027-06-21 | RHD4CZ7L131PT1401 | -111d |
|  | 6853 | **RHD4-02-002-L131-(PT)-Gate Valves (Direct Buried)** |  | 2027-06-05 | 2027-06-26 |  |  |
| RHD4CZ7L131PT3100 |  | Installation for Direct Buried Gate Valves - (RD-L-13/1)-Z7-L131-PT | 2d | 2027-06-05 | 2027-06-06 | RHD4PRSHLDOSPT1200, RHD4PRSHLSTAGPT1200, RHD4CZ7L131PT1301 FF, RHD4CZ7L131PT1300 FF, RHD4CZ7L131PT1301 SS, RHD4CZ7L131PT1300 SS | -84d |
| RHD4CZ7L131PT3200 |  | Stem and Service box for Direct Buried Gate Valves - (RD-L-13/1)-Z7-L131-PT | 2d | 2027-06-24 | 2027-06-26 | RHD4PRSHLDOSPT1300, RHD4PRSHLSTAGPT1300, RHD4CZ7L131PT3100, RHD4CZ7L131PT1501, RHD4CZ7L131PT1500 | -99d |
|  | 6856 | **RHD4-02-002-L131-(PT)-Wash out Valve Chambers** |  |  |  |  |  |
|  | 6857 | **RHD4-02-002-L131-(PT)-Wash out Valves** |  |  |  |  |  |
|  | 6858 | **RHD4-02-002-L131-(PT)-Air Valve Chambers** |  | 2027-05-29 | 2027-06-06 |  |  |
| RHD4CZ7L131PT2102 |  | Excavation and Bedding for Air Valve Chambers for Potable Water Network - (RD-L-13/1)-Z7-L131-PT | 2d | 2027-05-29 | 2027-05-30 | RHD4ENSDZ7APPPT130, RHD4CZ7L131PT1100 | -110d |
| RHD4CZ7L131PT2202 |  | PC works for Air Valve Chambers for Potable Water Network - (RD-L-13/1)-Z7-L131-PT | 2d | 2027-05-31 | 2027-06-01 | RHD4CZ7L131PT2102 | -110d |
| RHD4CZ7L131PT2302 |  | Installation for Air Valve Chambers for Potable Water Network - (RD-L-13/1)-Z7-L131-PT | 2d | 2027-06-02 | 2027-06-03 | RHD4PRSHLDOSPT1100, RHD4PRSHLDOSPT1400, RHD4PRSHLSTAGPT1100, RHD4PRSHLSTAGPT1400, RHD4CZ7L131PT2202 | -110d |
| RHD4CZ7L131PT2402 |  | Backfilling works for Air Valve Chambers for Potable Water Network - (RD-L-13/1)-Z7-L131-PT | 2d | 2027-06-05 | 2027-06-06 | RHD4CZ7L131PT2302 | -110d |
|  | 6859 | **RHD4-02-002-L131-(PT)-Air Valves** |  | 2027-06-05 | 2027-06-08 |  |  |
| RHD4CZ7L131PT3103 |  | Installation for Air Valves for Potable Water Network - (RD-L-13/1)-Z7-L131-PT | 2d | 2027-06-05 | 2027-06-06 | RHD4PRSHLDOSPT1200, RHD4PRSHLSTAGPT1200, RHD4CZ7L131PT2302 | -110d |
| RHD4CZ7L131PT3203 |  | Stem and Service box for Air Valves for Potable Water Network - (RD-L-13/1)-Z7-L131-PT | 2d | 2027-06-07 | 2027-06-08 | RHD4PRSHLDOSPT1300, RHD4PRSHLSTAGPT1300, RHD4CZ7L131PT3103, RHD4CZ7L131PT2402 | -110d |
|  | 6860 | **RHD4-02-002-L131-(PT)-Fire Hydrant** |  | 2027-06-24 | 2027-07-12 |  |  |
| RHD4CZ7L131PT4100 |  | Excavation and Bedding and Pipe Installation for Fire Hydrant - (RD-L-13/1)-Z7-L131-PT | 5d | 2027-06-24 | 2027-06-29 | RHD4ENSDZ7APPPT130, RHD4CZ7L131PT1501, RHD4CZ7L131PT1500 | -111d |
| RHD4CZ7L131PT4200 |  | Valve Installation for Fire Hydrant - (RD-L-13/1)-Z7-L131-PT | 3d | 2027-06-30 | 2027-07-03 | RHD4CZ7L131PT4100 | -111d |
| RHD4CZ7L131PT4300 |  | Stem for Fire Hydrant - (RD-L-13/1)-Z7-L131-PT | 3d | 2027-07-04 | 2027-07-06 | RHD4CZ7L131PT4200 | -111d |
| RHD4CZ7L131PT4400 |  | Fire Installation for Fire Hydrant - (RD-L-13/1)-Z7-L131-PT | 3d | 2027-07-07 | 2027-07-10 | RHD4PRSHLDOSPT1500, RHD4PRSHLSTAGPT1500, RHD4CZ7L131PT4300 | -111d |
| RHD4CZ7L131PT4500 |  | Protection Barriers for Fire Hydrant - (RD-L-13/1)-Z7-L131-PT | 2d | 2027-07-11 | 2027-07-12 | RHD4CZ7L131PT4400, RHD4CZ7L131PT3200 | -111d |
|  | 6861 | **RHD4-02-002-L131-(PT)-Concrete Encasement** |  | 2027-06-05 | 2027-06-14 |  |  |
| RHD4CZ7L131PT5100 |  | Pipe Encasement for Potable Pipelines - (RD-L-13/1)-Z7-L131-PT | 9d | 2027-06-05 | 2027-06-14 | RHD4CZ7L131PT1301 FF, RHD4CZ7L131PT1300 FF, RHD4CZ7L131PT1301 SS, RHD4CZ7L131PT1300 SS, RHD4CZ7L131PT1201, RHD4CZ7L131PT1200 | -111d |
|  | 6862 | **RHD4-02-002-Z7-L131-Irrigation Network - IRR** |  | 2027-05-29 | 2027-07-17 |  |  |
|  | 6863 | **RHD4-02-002-L131-(IRR)-HDPE Pipes - 160 mm diameter** |  | 2027-05-29 | 2027-06-20 |  |  |
| RHD4CZ7L131IRR1100 |  | Excavation works for HDPE Pipline 160 mm - (RD-L-13/1)-Z7-L131-IRR | 5d | 2027-05-29 | 2027-06-02 | RHD4ENSDZ7APPIRR140, RHD4ENMSRR2000, RHD4CZ7L131PT1101, RHD4CZ7L131PT1100, RHD4CZ7L131MV3401 | -110d |
| RHD4CZ7L131IRR1200 |  | Bedding works for HDPE Pipline 160 mm - (RD-L-13/1)-Z7-L131-IRR | 4d | 2027-06-03 | 2027-06-07 | RHD4CZ7L131IRR1100 | -90d |
| RHD4CZ7L131IRR1300 |  | Installing for HDPE Pipline 160 mm - (RD-L-13/1)-Z7-L131-IRR | 5d | 2027-06-08 | 2027-06-13 | RHD4PRSHLDOSIRR1000, RHD4PRSHLSTAGIRR1000, RHD4CZ7L131IRR1200 | -90d |
| RHD4CZ7L131IRR1400 |  | Primary Test for HDPE Pipline 160 mm - (RD-L-13/1)-Z7-L131-IRR | 2d | 2027-06-14 | 2027-06-15 | RHD4CZ7L131IRR1300 | -90d |
| RHD4CZ7L131IRR1500 |  | Backfilling and warning tape works for HDPE Pipline 160 mm - (RD-L-13/1)-Z7-L131-IRR | 4d | 2027-06-16 | 2027-06-20 | RHD4CZ7L131IRR1400 | -90d |
|  | 6685 | **RHD4-02-002-L131-(IRR)-Wash out Chamber** |  | 2027-06-03 | 2027-06-12 |  |  |
| RHD4CZ7L131IRR2101 |  | Excavation and Bedding for Wash out Chamber for Irrigation Network - (RD-L-13/1)-Z7-L131-IRR | 2d | 2027-06-03 | 2027-06-05 | RHD4CZ7L131IRR2102 SS | -109d |
| RHD4CZ7L131IRR2201 |  | PC works for Wash out Chamber for Irrigation Network - (RD-L-13/1)-Z7-L131-IRR | 2d | 2027-06-06 | 2027-06-07 | RHD4CZ7L131IRR2101 | -109d |
| RHD4CZ7L131IRR2301 |  | Installation for Wash out Chamber for Irrigation Network - (RD-L-13/1)-Z7-L131-IRR | 2d | 2027-06-08 | 2027-06-09 | RHD4CZ7L131IRR2201 | -109d |
| RHD4CZ7L131IRR2401 |  | Backfilling works for Wash out Chamber for Irrigation Network - (RD-L-13/1)-Z7-L131-IRR | 2d | 2027-06-10 | 2027-06-12 | RHD4CZ7L131IRR2301 | -109d |
|  | 6864 | **RHD4-02-002-L131-(IRR)-HDPE Pipes - 180 mm diameter** |  |  |  |  |  |
|  | 6871 | **RHD4-02-002-L131-(IRR)-Gate Valves (Direct Buried)** |  | 2027-07-13 | 2027-07-17 |  |  |
| RHD4CZ7L131IRR3100 |  | Installation for Direct Buried Gate Valves - (RD-L-13/1)-Z7-L131-IRR | 2d | 2027-07-13 | 2027-07-14 | RHD4PRSHLDOSIRR1100, RHD4PRSHLSTAGIRR1100, RHD4CZ7L131IRR1300 SS, RHD4CZ7L131IRR1300 FF, RHD4CZ7L131PT4500, RHD4CZ7L131PT3203 | -111d |
| RHD4CZ7L131IRR3200 |  | Stem and Service box for Direct Buried Gate Valves - (RD-L-13/1)-Z7-L131-IRR | 2d | 2027-07-15 | 2027-07-17 | RHD4PRSHLDOSIRR1300, RHD4PRSHLSTAGIRR1300, RHD4CZ7L131IRR3100, RHD4CZ7L131IRR1500 | -111d |
|  | 6876 | **RHD4-02-002-L131-(IRR)-Air Valve Chamber** |  | 2027-06-03 | 2027-06-12 |  |  |
| RHD4CZ7L131IRR2102 |  | Excavation and Bedding for Valve Chamber for Irrigation Network - (RD-L-13/1)-Z7-L131-IRR | 2d | 2027-06-03 | 2027-06-05 | RHD4ENSDZ7APPIRR140, RHD4CZ7L131IRR1100 | -110d |
| RHD4CZ7L131IRR2202 |  | PC works for Valve Chamber for Irrigation Network - (RD-L-13/1)-Z7-L131-IRR | 2d | 2027-06-06 | 2027-06-07 | RHD4CZ7L131IRR2102 | -110d |
| RHD4CZ7L131IRR2302 |  | Installation for Valve Chamber for Irrigation Network - (RD-L-13/1)-Z7-L131-IRR | 2d | 2027-06-08 | 2027-06-09 | RHD4PRSHLDOSIRR1200, RHD4PRSHLDOSIRR1400, RHD4PRSHLSTAGIRR1200, RHD4PRSHLSTAGIRR1400, RHD4CZ7L131IRR2202 | -110d |
| RHD4CZ7L131IRR2402 |  | Backfilling works for Valve Chamber for Irrigation Network - (RD-L-13/1)-Z7-L131-IRR | 2d | 2027-06-10 | 2027-06-12 | RHD4CZ7L131IRR2302 | -110d |
|  | 6877 | **RHD4-02-002-L131-(IRR)-Air Valves** |  | 2027-06-10 | 2027-06-14 |  |  |
| RHD4CZ7L131IRR3103 |  | Installation for Air Valves for Irrigation Network - (RD-L-13/1)-Z7-L131-IRR | 2d | 2027-06-10 | 2027-06-12 | RHD4PRSHLDOSIRR1100, RHD4PRSHLSTAGIRR1100, RHD4CZ7L131IRR2302 | -110d |
| RHD4CZ7L131IRR3203 |  | Stem and Service box for Air Valves for Irrigation Network - (RD-L-13/1)-Z7-L131-IRR | 2d | 2027-06-13 | 2027-06-14 | RHD4PRSHLDOSIRR1300, RHD4PRSHLSTAGIRR1300, RHD4CZ7L131IRR3103, RHD4CZ7L131IRR2402 | -110d |
|  | 6686 | **RHD4-02-002-L131-(IRR)-Wash out Valves** |  | 2027-06-10 | 2027-06-14 |  |  |
| RHD4CZ7L131IRR3102 |  | Installation for Wash out Valve for Irrigation Network - (RD-L-13/1)-Z7-L131-IRR | 2d | 2027-06-10 | 2027-06-12 | RHD4CZ7L131IRR2301 | -109d |
| RHD4CZ7L131IRR3202 |  | Stem and Service box for Wash out Valve for Irrigation Network - (RD-L-13/1)-Z7-L131-IRR | 2d | 2027-06-13 | 2027-06-14 | RHD4CZ7L131IRR3102, RHD4CZ7L131IRR2401, RHD4CZ7L131ST3500 | -109d |
|  | 6896 | **RHD4-02-002-Z7-L131-Medium Voltage Network - MV** |  | 2027-04-13 | 2027-09-01 |  |  |
|  | 6897 | **RHD4-02-002-L131-(MV)-Medium Voltage cable trench** |  | 2027-04-13 | 2027-09-01 |  |  |
| RHD4CZ7L131MV1100 |  | Excavation for Medium Voltage Trench - (RD-L-13/1)-Z7-L131-MV | 5d | 2027-04-13 | 2027-04-18 | RHD4ENSDZ7APPMV150, RHD4CZ7L131ST1204 | -90d |
| RHD4CZ7L131MV1200 |  | Trench Backfilling for Medium Voltage Network - (RD-L-13/1)-Z7-L131-MV | 5d | 2027-08-26 | 2027-09-01 | RHD4CZ7L131MV3200, RHD4CZ7L03MV1200 | -150.02d |
|  | 6898 | **RHD4-02-002-L131-(MV)-Medium Voltage duct banks** |  |  |  |  |  |
|  | 6899 | **RHD4-02-002-L131-(MV)-Medium Voltage cables 3Cx 500 mm²** |  | 2027-04-19 | 2027-04-29 |  |  |
| RHD4CZ7L131MV3100 |  | Installation of Medium Voltage Cables 3Cx 500 mm² - (RD-L-13/1)-Z7-L131-MV | 3d | 2027-04-19 | 2027-04-21 | RHD4PRSHLDOSMV1100, RHD4ENMSMV2000, RHD4ENMSMV2010, RHD4PRSHLSTAGMV1100, RHD4CZ7L131MV1100 | -90d |
| RHD4CZ7L131MV3200 |  | Joints Installation of Medium Voltage Cables 3Cx 500 mm² - (RD-L-13/1)-Z7-L131-MV | 2d | 2027-04-22 | 2027-04-24 | RHD4PRSHLDOSMV1300, RHD4PRSHLSTAGMV1300, RHD4CZ7L131MV3100 | -90d |
| RHD4CZ7L131MV3300 |  | Testing of Medium Voltage Cables 3Cx 500 mm² - (RD-L-13/1)-Z7-L131-MV | 3d | 2027-04-25 | 2027-04-27 | RHD4CZ7L131MV3200 | -90d |
| RHD4CZ7L131MV3400 |  | Termination of Medium Voltage Cables 3Cx 500 mm² - (RD-L-13/1)-Z7-L131-MV | 2d | 2027-04-28 | 2027-04-29 | RHD4CZ7L131MV3300 | -90d |
|  | 6900 | **RHD4-02-002-L131-(MV)-Medium Voltage cables 3Cx 50 mm²** |  | 2027-04-28 | 2027-04-29 |  |  |
| RHD4CZ7L131MV3401 |  | Termination of Medium Voltage Cables 3Cx 50 mm² - (RD-L-13/1)-Z7-L131-MV | 2d | 2027-04-28 | 2027-04-29 | RHD4CZ7L131MV3400 SS, RHD4CZ7L131MV3300 | -90d |
|  | 6901 | **RHD4-02-002-L131-(MV)-Normally open Point (Outdoor Type)** |  |  |  |  |  |
|  | 6903 | **RHD4-02-002-Z7-L131-Low Voltage Network - LV** |  | 2027-09-01 | 2027-09-22 |  |  |
|  | 6904 | **RHD4-02-002-L131-(LV)-Low Voltage duct banks** |  | 2027-09-01 | 2027-09-11 |  |  |
| RHD4CZ7L131LV2100 |  | Excavation of Duct Banks for Low Voltage Network - (RD-L-13/1)-Z7-L131-LV | 2d | 2027-09-01 | 2027-09-04 | RHD4ENSDZ7APPLV160, RHD4CZ7L131PT4500, RHD4CZ7L131IRR3200, RHD4CZ7L131MV1200, RHD4CZ7L131MV3401 | -150.02d |
| RHD4CZ7L131LV2200 |  | Installation of Duct Banks for Low Voltage Network - (RD-L-13/1)-Z7-L131-LV | 2d | 2027-09-04 | 2027-09-06 | RHD4PRSHLDOSLV1000, RHD4PRSHLSTAGLV1000, RHD4CZ7L131LV2100 | -150.02d |
| RHD4CZ7L131LV2300 |  | Pouring of Duct Banks for Low Voltage Network - (RD-L-13/1)-Z7-L131-LV | 2d | 2027-09-06 | 2027-09-08 | RHD4CZ7L131LV2200 | -150.02d |

| ID | WBS | Task | Duration | Start | Finish | Predecessors | Total float |
| --- | --- | --- | --- | --- | --- | --- | --- |
| RHD4CZ7L131LV2400 |  | Backfilling of Duct Banks for Low Voltage Network - (RD-L-13/1)-Z7-L131-LV | 2d | 2027-09-08 | 2027-09-11 | RHD4CZ7L131LV2300 | -148.02d |
|  | 6905 | **RHD4-02-002-L131-(LV)-Low Voltage Drawpit** |  | 2027-09-08 | 2027-09-13 |  |  |
| RHD4CZ7L131LV5100 |  | Excavation of Drawpit size 900x900x1000mm for Low Voltage Network - (RD-L-13/1)-Z7-L131-LV | 2d | 2027-09-08 | 2027-09-11 | RHD4ENSDZ7APPLV160, RHD4CZ7L131LV2300, RHD4CZ7L131MV3401 | -150.02d |
| RHD4CZ7L131LV5200 |  | Installation of Drawpit size 900x900x1000mm for Low Voltage Network - (RD-L-13/1)-Z7-L131-LV | 2d | 2027-09-11 | 2027-09-13 | RHD4PRSHLDOSLV1400, RHD4PRSHLSTAGLV1400, RHD4CZ7L131LV5100 | -150.02d |
|  | 6906 | **RHD4-02-002-L131-(LV)-Low Voltage cables** |  | 2027-09-13 | 2027-09-22 |  |  |
| RHD4CZ7L131LV3100 |  | Excavation for Low Voltage Cables for Low Voltage Network - (RD-L-13/1)-Z7-L131-LV | 2d | 2027-09-13 | 2027-09-15 | RHD4ENSDZ7APPLV160, RHD4CZ7L131LV2400, RHD4CZ7L131LV5200 | -150.02d |
| RHD4CZ7L131LV3200 |  | Cable Laying of Low Voltage Cables for Low Voltage Network - (RD-L-13/1)-Z7-L131-LV | 2d | 2027-09-15 | 2027-09-18 | RHD4PRSHLDOSLV1100, RHD4ENMSLV2000, RHD4ENMSLV2010, RHD4PRSHLSTAGLV1100, RHD4CZ7L131LV3100 | -150.02d |
| RHD4CZ7L131LV3300 |  | Warning tape and Backfill for Low Voltage Cables for Low Voltage Network - (RD-L-13/1)-Z7-L131-LV | 2d | 2027-09-18 | 2027-09-20 | RHD4CZ7L131LV3200 | -150.02d |
| RHD4CZ7L131LV3400 |  | Testing of Low Voltage Cables for Low Voltage Network - (RD-L-13/1)-Z7-L131-LV | 2d | 2027-09-20 | 2027-09-22 | RHD4CZ7L131LV3300 | -150.02d |
|  | 6909 | **RHD4-02-002-Z7-L131-Street Lighting Network - SL** |  | 2027-09-04 | 2027-11-09 |  |  |
|  | 6910 | **RHD4-02-002-L131-(SL)-Street Lighting duct banks** |  | 2027-09-04 | 2027-09-13 |  |  |
| RHD4CZ7L131SL2100 |  | Excavation of Duct Banks for Street Lighting Network - (RD-L-13/1)-Z7-L131-SL | 2d | 2027-09-04 | 2027-09-06 | RHD4ENSDZ7APPSL170, RHD4CZ7L131LV2100 | -140.02d |
| RHD4CZ7L131SL2200 |  | Installation of Duct Banks for Street Lighting Network - (RD-L-13/1)-Z7-L131-SL | 2d | 2027-09-06 | 2027-09-08 | RHD4PRSHLDOSSL1000, RHD4PRSHLSTAGSL1000, RHD4CZ7L131SL2100, RHD4CZ7L131LV2200 | -140.02d |
| RHD4CZ7L131SL2300 |  | Pouring of Duct Banks for Street Lighting Network - (RD-L-13/1)-Z7-L131-SL | 2d | 2027-09-08 | 2027-09-11 | RHD4CZ7L131SL2200, RHD4CZ7L131LV2300 | -140.02d |
| RHD4CZ7L131SL2400 |  | Backfilling of Duct Banks for Street Lighting Network - (RD-L-13/1)-Z7-L131-SL | 2d | 2027-09-11 | 2027-09-13 | RHD4CZ7L131SL2300, RHD4CZ7L131LV2400 | -119.02d |
|  | 6911 | **RHD4-02-002-L131-(SL)-Street Lighting Drawpit** |  | 2027-09-22 | 2027-09-28 |  |  |
| RHD4CZ7L131SL5100 |  | Excavation of Drawpit size 600x600x900mm for Street Lighting Network - (RD-L-13/1)-Z7-L131-SL | 2d | 2027-09-22 | 2027-09-26 | RHD4ENSDZ7APPSL170, RHD4CZ7L131SL2300, RHD4CZ7L131LV3400 | -150.02d |
| RHD4CZ7L131SL5200 |  | Installation of Drawpit size 600x600x900mm for Street Lighting Network - (RD-L-13/1)-Z7-L131-SL | 2d | 2027-09-26 | 2027-09-28 | RHD4PRSHLDOSSL1400, RHD4PRSHLSTAGSL1400, RHD4CZ7L131SL5100 | -150.02d |
|  | 6912 | **RHD4-02-002-L131-(SL)-Street Lighting cables** |  | 2027-09-28 | 2027-10-20 |  |  |
| RHD4CZ7L131SL3100 |  | Excavation for Street Lighting Cables for Street Lighting Network - (RD-L-13/1)-Z7-L131-SL | 6d | 2027-09-28 | 2027-10-05 | RHD4ENSDZ7APPSL170, RHD4CZ7L131SL5200 | -150.02d |
| RHD4CZ7L131SL3200 |  | Cable Laying of Street Lighting Cables for Street Lighting Network - (RD-L-13/1)-Z7-L131-SL | 5d | 2027-10-05 | 2027-10-11 | RHD4PRSHLDOSSL1100, RHD4ENMSSL2000, RHD4ENMSSL2010, RHD4PRSHLSTAGSL1100, RHD4CZ7L131SL3100 | -150.02d |
| RHD4CZ7L131SL3300 |  | Warning tape and Backfill for Street Lighting Cables for Street Lighting Network - (RD-L-13/1)-Z7-L131-SL | 5d | 2027-10-11 | 2027-10-17 | RHD4CZ7L131SL3200 | -150.02d |
| RHD4CZ7L131SL3400 |  | Testing of Street Lighting Cables for Street Lighting Network - (RD-L-13/1)-Z7-L131-SL | 3d | 2027-10-17 | 2027-10-20 | RHD4CZ7L131SL3300 | -150.02d |
|  | 6913 | **RHD4-02-002-L131-(SL)-Street Lighting Poles** |  | 2027-10-20 | 2027-11-09 |  |  |
| RHD4CZ7L131SL1100 |  | Excavation for RC Base for Lighting Poles for Street Lighting Network - (RD-L-13/1)-Z7-L131-SL | 3d | 2027-10-20 | 2027-10-24 | RHD4ENSDZ7APPSL170, RHD4CZ7L131SL2400, RHD4CZ7L131SL3400 | -150.02d |
| RHD4CZ7L131SL1200 |  | Installation for RC Base for Lighting Poles for Street Lighting Network - (RD-L-13/1)-Z7-L131-SL | 3d | 2027-10-24 | 2027-10-27 | RHD4CZ7L131SL1100 | -150.02d |
| RHD4CZ7L131SL1300 |  | Backfill for RC Base for Lighting Poles for Street Lighting Network - (RD-L-13/1)-Z7-L131-SL | 3d | 2027-10-27 | 2027-10-31 | RHD4CZ7L131SL1200 | -150.02d |
| RHD4CZ7L131SL1400 |  | Installation for Lighting Poles for Street Lighting Network - (RD-L-13/1)-Z7-L131-SL | 5d | 2027-10-31 | 2027-11-06 | RHD4PRSHLDOSSL1200, RHD4ENMSSL2000, RHD4ENMSSL2010, RHD4PRSHLSTAGSL1200, RHD4CZ7L131SL1300, RHD4CZ7L131SL3400 | -150.02d |
| RHD4CZ7L131SL1500 |  | Luminaire Installation for Lighting Poles for Street Lighting Network - (RD-L-13/1)-Z7-L131-SL | 3d | 2027-11-06 | 2027-11-09 | RHD4PRSHLDOSSL1300, RHD4PRSHLSTAGSL1300, RHD4CZ7L131SL1400 | -150.02d |
|  | 6915 | **RHD4-02-002-L131-(SL)-Street Lighting Earthing System** |  |  |  |  |  |
|  | 6921 | **RHD4-02-002-Z7-L131-Telecommunications Network - TC** |  | 2027-09-06 | 2027-12-04 |  |  |
|  | 6922 | **RHD4-02-002-L131-(TC)-Telecommunications Ducts** |  | 2027-11-09 | 2027-12-04 |  |  |
| RHD4CZ7L131TC2100 |  | Excavation of HDPE Ducts for Telecom Network - (RD-L-13/1)-Z7-L131-TC | 8d | 2027-11-09 | 2027-11-18 | RHD4ENSDZ7APPTC190, RHD4CZ7L131LV2100, RHD4CZ7L131SL1500 | -150.02d |
| RHD4CZ7L131TC2200 |  | Installation of HDPE Ducts for Telecom Network - (RD-L-13/1)-Z7-L131-TC | 5d | 2027-11-18 | 2027-11-24 | RHD4PRSHLDOSTC1000, RHD4PRSHLSTAGTC1000, RHD4CZ7L131TC2100 | -147.02d |
| RHD4CZ7L131TC2400 |  | Backfilling of HDPE Ducts for Telecom Network - (RD-L-13/1)-Z7-L131-TC | 8d | 2027-11-24 | 2027-12-04 | RHD4CZ7L131TC2200 | -133.02d |
|  | 6923 | **RHD4-02-002-L131-(TC)-Telecommunications Manholes** |  | 2027-11-18 | 2027-11-25 |  |  |
| RHD4CZ7L131TC5100 |  | Excavation for Manholes for Telecom Network - (RD-L-13/1)-Z7-L131-TC | 3d | 2027-11-18 | 2027-11-22 | RHD4ENSDZ7APPTC190, RHD4CZ7L131TC2100 | -150.02d |
| RHD4CZ7L131TC5200 |  | Installation of Manholes for Telecom Network - (RD-L-13/1)-Z7-L131-TC | 3d | 2027-11-22 | 2027-11-25 | RHD4PRSHLDOSTC1200, RHD4PRSHLSTAGTC1200, RHD4CZ7L131TC5100, RHD4CZ7L131TC2200 SS | -150.02d |
|  | 6924 | **RHD4-02-002-L131-(TC)-Telecomminications Road Crossings** |  | 2027-09-06 | 2027-09-28 |  |  |
| RHD4CZ7L131TC3100 |  | Excavation for Road Crossings for Telecom Network - (RD-L-13/1)-Z7-L131-TC | 4d | 2027-09-06 | 2027-09-11 | RHD4ENSDZ7APPTC190, RHD4CZ7L131SL2100 | -107.02d |
| RHD4CZ7L131TC3200 |  | Installation of Road Crossings for Telecom Network - (RD-L-13/1)-Z7-L131-TC | 5d | 2027-09-11 | 2027-09-16 | RHD4PRSHLDOSTC1100, RHD4PRSHLSTAGTC1100, RHD4CZ7L131TC3100, RHD4CZ7L131SL2200 | -107.02d |
| RHD4CZ7L131TC3300 |  | Pouring of Road Crossings for Telecom Network - (RD-L-13/1)-Z7-L131-TC | 5d | 2027-09-16 | 2027-09-22 | RHD4CZ7L131TC3200, RHD4CZ7L131SL2300 | -106.02d |
| RHD4CZ7L131TC3400 |  | Backfilling of Road Crossings for Telecom Network - (RD-L-13/1)-Z7-L131-TC | 4d | 2027-09-22 | 2027-09-28 | RHD4CZ7L131TC3300, RHD4CZ7L131SL2400, RHD4CZ7L131LV2400 | -104.02d |
|  | 6925 | **RHD4-02-002-Z7-L131-Information and Communication Technologies - ICT** |  | 2027-09-11 | 2027-12-23 |  |  |
|  | 6926 | **RHD4-02-002-L131-(ICT)-Information and Communication Technologies Ducts** |  | 2027-11-25 | 2027-12-23 |  |  |
| RHD4CZ7L131ICT2100 |  | Excavation of HDPE Ducts for ICT Network - (RD-L-13/1)-Z7-L131-ICT | 8d | 2027-11-25 | 2027-12-05 | RHD4ENSDZ7APPICT200, RHD4CZ7L131ICT3400, RHD4CZ7L131TC5200 | -150.02d |
| RHD4CZ7L131ICT2200 |  | Installation of HDPE Ducts for ICT Network - (RD-L-13/1)-Z7-L131-ICT | 5d | 2027-12-05 | 2027-12-11 | RHD4PRSHLDOSICT1000, RHD4PRSHLSTAGICT1000, RHD4CZ7L131ICT2100 | -147.02d |
| RHD4CZ7L131ICT2400 |  | Backfilling of HDPE Ducts for ICT Network - (RD-L-13/1)-Z7-L131-ICT | 8d | 2027-12-14 | 2027-12-23 | RHD4CZ7L131ICT2200, RHD4CZ7L131ICT5200 | -150.02d |
|  | 6927 | **RHD4-02-002-L131-(ICT)-Information and Communication Technologies Manholes** |  | 2027-12-05 | 2027-12-14 |  |  |
| RHD4CZ7L131ICT5100 |  | Excavation for Manholes for ICT Network - (RD-L-13/1)-Z7-L131-ICT | 4d | 2027-12-05 | 2027-12-09 | RHD4ENSDZ7APPICT200, RHD4CZ7L131ICT2100 | -150.02d |
| RHD4CZ7L131ICT5200 |  | Installation of Manholes for ICT Network - (RD-L-13/1)-Z7-L131-ICT | 4d | 2027-12-09 | 2027-12-14 | RHD4PRSHLDOSICT1200, RHD4PRSHLSTAGICT1200, RHD4CZ7L131ICT5100 | -150.02d |
|  | 6928 | **RHD4-02-002-L131-(ICT)-Information and Communication Technologies Road Crossings** |  | 2027-09-11 | 2027-10-06 |  |  |
| RHD4CZ7L131ICT3100 |  | Excavation for Road Crossings for ICT Network - (RD-L-13/1)-Z7-L131-ICT | 4d | 2027-09-11 | 2027-09-15 | RHD4ENSDZ7APPICT200, RHD4CZ7L131TC3100 | -106.02d |
| RHD4CZ7L131ICT3200 |  | Installation of Road Crossings for ICT Network - (RD-L-13/1)-Z7-L131-ICT | 6d | 2027-09-16 | 2027-09-25 | RHD4PRSHLDOSICT1100, RHD4PRSHLSTAGICT1100, RHD4CZ7L131ICT3100, RHD4CZ7L131TC3200 | -107.02d |
| RHD4CZ7L131ICT3300 |  | Pouring of Road Crossings for ICT Network - (RD-L-13/1)-Z7-L131-ICT | 6d | 2027-09-25 | 2027-10-02 | RHD4CZ7L131ICT3200, RHD4CZ7L131TC3300 | -107.02d |
| RHD4CZ7L131ICT3400 |  | Backfilling of Road Crossings for ICT Network - (RD-L-13/1)-Z7-L131-ICT | 4d | 2027-10-02 | 2027-10-06 | RHD4CZ7L131ICT3300, RHD4CZ7L131TC3400 | -107.02d |
|  | 6916 | **RHD4-02-002-Z7-L131-Landscape Network - LS** |  |  |  |  |  |
|  | 6917 | **RHD4-02-002-L131-(LS)-Landscape Lighting cables** |  |  |  |  |  |
|  | 6919 | **RHD4-02-002-L131-(LS)-Landscape Bollard Poles** |  |  |  |  |  |
|  | 6929 | **RHD4-02-002-Z7-L131-Security Network - CCTV** |  | 2027-12-23 | 2028-01-22 |  |  |
|  | 6930 | **RHD4-02-002-L131-(CCTV)-Civil Works** |  | 2027-12-23 | 2027-12-29 |  |  |
| RHD4CZ7L131CCTV2100 |  | Civil Works for Security Network - (RD-L-13/1)-Z7-L131-CCTV | 5d | 2027-12-23 | 2027-12-29 | RHD4CZ7L131ICT2400, RHD4CZ7L131TC2400 | -150.02d |
|  | 4851 | **RHD4-02-002-L131-(CCTV)-CCTV Poles** |  | 2027-12-29 | 2028-01-10 |  |  |
| RHD4CZ7L131CCTV1100 |  | Excavation for RC Base for CCTV Poles for Security Network - (RD-L-13/1)-Z7-L131-CCTV | 2d | 2027-12-29 | 2028-01-01 | RHD4CZ7L131CCTV2100 | -148.02d |
| RHD4CZ7L131CCTV1200 |  | Installation for RC Base for CCTV Poles for Security Network - (RD-L-13/1)-Z7-L131-CCTV | 2d | 2028-01-01 | 2028-01-03 | RHD4CZ7L131CCTV1100 | -148.02d |
| RHD4CZ7L131CCTV1300 |  | Backfill for RC Base for CCTV Poles for Security Network - (RD-L-13/1)-Z7-L131-CCTV | 2d | 2028-01-03 | 2028-01-05 | RHD4CZ7L131CCTV1200 | -148.02d |
| RHD4CZ7L131CCTV1400 |  | Installation for CCTV Poles for Security Network - (RD-L-13/1)-Z7-L131-CCTV | 2d | 2028-01-05 | 2028-01-08 | RHD4CZ7L131CCTV1300 | -148.02d |
| RHD4CZ7L131CCTV1500 |  | Protection post Installation for CCTV Poles for Security Network - (RD-L-13/1)-Z7-L131-CCTV | 2d | 2028-01-08 | 2028-01-10 | RHD4CZ7L131CCTV1400 | -145.02d |
|  | 4852 | **RHD4-02-002-L131-(CCTV)-Camera** |  | 2028-01-10 | 2028-01-12 |  |  |
| RHD4CZ7L131CCTV3100 |  | Installation for Cameras for Security Network - (RD-L-13/1)-Z7-L131-CCTV | 2d | 2028-01-10 | 2028-01-12 | RHD4CZ7L131CCTV1400, RHD4CZ7L131CCTV4100 | -147.02d |

| ID | WBS | Task | Duration | Start | Finish | Predecessors | Total float |
| --- | --- | --- | --- | --- | --- | --- | --- |
|  | 4853 | **RHD4-02-002-L131-(CCTV)-Power and Infrastructure** |  | 2028-01-08 | 2028-01-12 |  |  |
| RHD4CZ7L131CCTV4100 |  | Installation of Power outlet, UPS and midspan for PTZ Camerafor Cameras for Security Network - (RD-L-13/1)-Z7-L131-CCTV | 2d | 2028-01-08 | 2028-01-10 | RHD4CZ7L131CCTV1400 | -148.02d |
| RHD4CZ7L131CTV4200 |  | Short Range Wireless PoP wireless Bridgefor CCTV Poles for Security Network - (RD-C-2)-Z7-C02-CCTV | 2d | 2028-01-10 | 2028-01-12 | RHD4CZ7L131CCTV4100 | -148.02d |
|  | 4855 | **RHD4-02-002-L131-(CCTV)-CCTV Panels and Components** |  | 2028-01-12 | 2028-01-22 |  |  |
| RHD4CZ7L131CCTV6100 |  | Installation for CCTV Panels for Security Network - (RD-L-13/1)-Z7-L131-CCTV | 8d | 2028-01-12 | 2028-01-22 | RHD4CZ7L131CCTV3100, RHD4CZ7L131CCTV1500, RHD4CZ7L131SW1501, RHD4CZ7L131SW3500, RHD4CZ7L03IRR3202, RHD4CZ7A012IRR3202 | -147.02d |
|  | 7135 | **RHD4-02-002-Z7-C013** |  | 2027-02-11 | 2028-01-29 |  |  |
|  | 7166 | **RHD4-02-002-Z7-C013-Crossings Sewage Network - SWCr** |  |  |  |  |  |
|  | 7182 | **RHD4-02-002-C013-(SWCr)-Air Valve Chambers** |  |  |  |  |  |
|  | 7183 | **RHD4-02-002-C013-(SWCr)-Air Valves** |  |  |  |  |  |
|  | 7257 | **RHD4-02-002-Z7-C013-Crossings Irrigation Network - IRRC** |  |  |  |  |  |
|  | 7262 | **RHD4-02-002-C013-(IRRC)-HDPE Pipes - 315 mm diameter** |  |  |  |  |  |
|  | 7314 | **RHD4-02-002-Z7-C013-Road Works - RD** |  | 2027-03-06 | 2028-01-29 |  |  |
|  | 7315 | **RHD4-02-002-C013-(RD)-Subgrade** |  | 2027-03-06 | 2027-03-22 |  |  |
| RHD4CZ7C013RD1100 |  | Supply, lay and compaction subgrade compacted thickness 300 mm for Roads - (RD-C-1/3)-Z7-C013-RD | 12d | 2027-03-06 | 2027-03-22 | RHD4ENSDZ7APPEW100, RHD4ENSDZ7APPRD220, RHD4CZ7C032RD1100 | -185d |
|  | 7316 | **RHD4-02-002-C013-(RD)-Aggregate Base Course** |  | 2027-03-23 | 2027-04-01 |  |  |
| RHD4CZ7C013RD2100 |  | Supply, lay and compaction Aggregate base course compacted thickness 300 mmfor Roads - (RD-C-1/3)-Z7-C013-RD | 9d | 2027-03-23 | 2027-04-01 | RHD4PRSHLDOSRD1000, RHD4PRSHLSTAGRD1000, RHD4CZ7C013RD1100 | -185d |
|  | 7317 | **RHD4-02-002-C013-(RD)-Bituminous base course Two Layers, including (MC1)&(RC2)** |  | 2027-04-03 | 2027-11-28 |  |  |
| RHD4CZ7C013RD3100 |  | Supply, lay and Asphaltic base course including Prime Coat (MC1) for 1st Layer - (RD-C-1/3)-Z7-C013-RD | 4d | 2027-04-03 | 2027-04-06 | RHD4PRSHLDOSRD1100, RHD4ENMSASPH2000, RHD4ENMSASPH2010, RHD4PRSHLSTAGRD1100, RHD4CZ7C013RD2100 | -185d |
| RHD4CZ7C013RD3200 |  | Supply, lay and Asphaltic base course including Tack Coat (RC2) for 2nd Layer - (RD-C-1/3)-Z7-C013-RD | 4d | 2027-11-24 | 2027-11-28 | RHD4PRSHLDOSRD1100, RHD4PRSHLSTAGRD1100, RHD4CZ7C013ICT5200, RHD4CZ7L131RD3200 | -141d |
|  | 7319 | **RHD4-02-002-C013-(RD)-Precast Concrete Curb** |  | 2027-11-29 | 2027-12-04 |  |  |
| RHD4CZ7C013RD5100 |  | Supply and installation Precast Concrete Kerb for Roads - (RD-C-1/3)-Z7-C013-RD | 5d | 2027-11-29 | 2027-12-04 | RHD4PRSHLDOSRD1200, RHD4ENMSRD2000, RHD4ENMSRD2010, RHD4PRSHLSTAGRD1200, RHD4CZ7C013RD3200 | -141d |
|  | 7322 | **RHD4-02-002-C013-(RD)-Traffic Signage** |  | 2028-01-22 | 2028-01-29 |  |  |
| RHD4CZ7C013RD8100 |  | Installation of Traffic Signage for Road Network - (RD-C-1/3)-Z7-C013-RD | 6d | 2028-01-22 | 2028-01-29 | RHD4PRSHLDOSRD1600, RHD4PRSHLSTAGRD1600, RHD4CZ7C013RD5100, RHD4CZ7C013TC2400, RHD4CZ7C013ICT2400, RHD4CZ7L131CCTV6100, RHD4CZ7L131CCTV6100 FF | -147.02d |
|  | 7320 | **RHD4-02-002-C013-(RD)-Precast Interlocking Block Pavers** |  |  |  |  |  |
|  | 7318 | **RHD4-02-002-C013-(RD)-Bituminous concrete wearing course including tack coat (RC2)** |  | 2027-12-05 | 2027-12-06 |  |  |
| RHD4CZ7C013RD4100 |  | Supply, lay and compaction Asphaltic wearing course including tack Coat (RC2)for Road Network - (RD-C-1/3)-Z7-C013-RD | 2d | 2027-12-05 | 2027-12-06 | RHD4CZ7C013RD5100 | -141d |
|  | 7321 | **RHD4-02-002-C013-(RD)-Pavement Marking** |  | 2027-12-07 | 2027-12-13 |  |  |
| RHD4CZ7C013RD7100 |  | Pavement Markings for Road Network - (RD-C-1/3)-Z7-C013-RD | 6d | 2027-12-07 | 2027-12-13 | RHD4PRSHLDOSRD1500, RHD4PRSHLSTAGRD1500, RHD4CZ7C013RD4100 | -141d |
|  | 7240 | **RHD4-02-002-Z7-C013-Irrigation Network - IRR** |  | 2027-02-11 | 2027-04-11 |  |  |
|  | 7246 | **RHD4-02-002-C013-(IRR)-HDPE Pipes - 400 mm diameter** |  |  |  |  |  |
|  | 1770 | **RHD4-02-002-C013-(IRR)-Air Valves** |  | 2027-03-23 | 2027-03-28 |  |  |
| RHD4CZ7C013IRR3103 |  | Installation for Air Valves for Irrigation Network - (RD-C-1/3)-Z7-C013-IRR | 2d | 2027-03-23 | 2027-03-25 | RHD4CZ7C013IRR2302 | -173.02d |
| RHD4CZ7C013IRR3203 |  | Stem and Service box for Air Valves for Irrigation Network - (RD-C-1/3)-Z7-C013-IRR | 2d | 2027-03-25 | 2027-03-28 | RHD4CZ7C013IRR3103, RHD4CZ7C013IRR2402 | -173.02d |
|  | 7245 | **RHD4-02-002-C013-(IRR)-HDPE Pipes - 315 mm diameter** |  | 2027-02-11 | 2027-02-24 |  |  |
| RHD4CZ7C013IRR1104 |  | Excavation works for HDPE Pipline 315 mm - (RD-C-1/3)-Z7-C013-IRR | 2d | 2027-02-11 | 2027-02-14 | RHD4ENSDZ7APPIRR140, RHD4ENMSRR2000, RHD4CZ7C013RW3000 | -174.02d |
| RHD4CZ7C013IRR1204 |  | Bedding works for HDPE Pipline 315 mm - (RD-C-1/3)-Z7-C013-IRR | 2d | 2027-02-14 | 2027-02-16 | RHD4CZ7C013IRR1104 | -161.02d |
| RHD4CZ7C013IRR1304 |  | Installing for HDPE Pipline 315 mm - (RD-C-1/3)-Z7-C013-IRR | 2d | 2027-02-16 | 2027-02-18 | RHD4PRSHLDOSIRR1000, RHD4PRSHLSTAGIRR1000, RHD4CZ7C013IRR1204 | -161.02d |
| RHD4CZ7C013IRR1404 |  | Primary Test for HDPE Pipline 315 mm - (RD-C-1/3)-Z7-C013-IRR | 2d | 2027-02-18 | 2027-02-21 | RHD4CZ7C013IRR1304 | -161.02d |
| RHD4CZ7C013IRR1504 |  | Backfilling and warning tape works for HDPE Pipline 315 mm - (RD-C-1/3)-Z7-C013-IRR | 2d | 2027-02-21 | 2027-02-24 | RHD4CZ7C013IRR1404 | -161.02d |
|  | 6107 | **RHD4-02-002-C013-(IRR)-HDPE Pipes - 160 mm diameter** |  | 2027-02-14 | 2027-02-27 |  |  |
| RHD4CZ7C013IRR1100 |  | Excavation works for HDPE Pipline 160 mm - (RD-C-1/3)-Z7-C013-IRR | 2d | 2027-02-14 | 2027-02-16 | RHD4CZ7C013IRR1104 | -174.02d |
| RHD4CZ7C013IRR1200 |  | Bedding works for HDPE Pipline 160 mm - (RD-C-1/3)-Z7-C013-IRR | 2d | 2027-02-16 | 2027-02-18 | RHD4CZ7C013IRR1100 | -152.02d |
| RHD4CZ7C013IRR1300 |  | Installing for HDPE Pipline 160 mm - (RD-C-1/3)-Z7-C013-IRR | 2d | 2027-02-18 | 2027-02-21 | RHD4CZ7C013IRR1200 | -152.02d |
| RHD4CZ7C013IRR1400 |  | Primary Test for HDPE Pipline 160 mm - (RD-C-1/3)-Z7-C013-IRR | 2d | 2027-02-21 | 2027-02-24 | RHD4CZ7C013IRR1300 | -152.02d |
| RHD4CZ7C013IRR1500 |  | Backfilling and warning tape works for HDPE Pipline 160 mm - (RD-C-1/3)-Z7-C013-IRR | 2d | 2027-02-24 | 2027-02-27 | RHD4CZ7C013IRR1400 | -152.02d |
|  | 6115 | **RHD4-02-002-C013-(IRR)-Gate Valves (Direct Buried)** |  | 2027-04-07 | 2027-04-11 |  |  |
| RHD4CZ7C013IRR3100 |  | Installation for Direct Buried Gate Valves - (RD-C-1/3)-Z7-C013-IRR | 2d | 2027-04-07 | 2027-04-08 | RHD4CZ7C013IRR2402, RHD4CZ7C013RD3100 | -185d |
| RHD4CZ7C013IRR3200 |  | Stem and Service box for Direct Buried Gate Valves - (RD-C-1/3)-Z7-C013-IRR | 2d | 2027-04-10 | 2027-04-11 | RHD4CZ7C013IRR3100, RHD4CZ7C013IRR1500 | -185d |
|  | 1769 | **RHD4-02-002-C013-(IRR)-Air Valve Chamber** |  | 2027-03-16 | 2027-03-25 |  |  |
| RHD4CZ7C013IRR2102 |  | Excavation and Bedding for Valve Chamber for Irrigation Network - (RD-C-1/3)-Z7-C013-IRR | 2d | 2027-03-16 | 2027-03-18 | RHD4CZ7C013IRR1501 | -174.02d |
| RHD4CZ7C013IRR2202 |  | PC works for Valve Chamber for Irrigation Network - (RD-C-1/3)-Z7-C013-IRR | 2d | 2027-03-18 | 2027-03-21 | RHD4CZ7C013IRR2102 | -174.02d |
| RHD4CZ7C013IRR2302 |  | Installation for Valve Chamber for Irrigation Network - (RD-C-1/3)-Z7-C013-IRR | 2d | 2027-03-21 | 2027-03-23 | RHD4CZ7C013IRR2202 | -174.02d |
| RHD4CZ7C013IRR2402 |  | Backfilling works for Valve Chamber for Irrigation Network - (RD-C-1/3)-Z7-C013-IRR | 2d | 2027-03-23 | 2027-03-25 | RHD4CZ7C013IRR2302 | -174.02d |
|  | 8188 | **RHD4-02-002-C013-(IRR)-HDPE Pipes - 180 mm diameter** |  | 2027-02-16 | 2027-03-16 |  |  |
| RHD4CZ7C013IRR1101 |  | Excavation works for HDPE Pipline 180 mm - (RD-C-1/3)-Z7-C013-IRR | 5d | 2027-02-16 | 2027-02-23 | RHD4CZ7C013IRR1100 | -174.02d |
| RHD4CZ7C013IRR1201 |  | Bedding works for HDPE Pipline 180 mm - (RD-C-1/3)-Z7-C013-IRR | 4d | 2027-02-23 | 2027-02-28 | RHD4CZ7C013IRR1101 | -174.02d |
| RHD4CZ7C013IRR1301 |  | Installing for HDPE Pipline 180 mm - (RD-C-1/3)-Z7-C013-IRR | 5d | 2027-02-28 | 2027-03-06 | RHD4CZ7C013IRR1201 | -174.02d |
| RHD4CZ7C013IRR1401 |  | Primary Test for HDPE Pipline 180 mm - (RD-C-1/3)-Z7-C013-IRR | 2d | 2027-03-06 | 2027-03-08 | RHD4CZ7C013IRR1301 | -174.02d |
| RHD4CZ7C013IRR1501 |  | Backfilling and warning tape works for HDPE Pipline 180 mm - (RD-C-1/3)-Z7-C013-IRR | 4d | 2027-03-08 | 2027-03-16 | RHD4CZ7C013IRR1401 | -174.02d |
|  | 7274 | **RHD4-02-002-Z7-C013-Medium Voltage Network - MV** |  | 2027-04-12 | 2027-05-02 |  |  |
|  | 7275 | **RHD4-02-002-C013-(MV)-Medium Voltage cable trench** |  | 2027-04-12 | 2027-04-29 |  |  |
| RHD4CZ7C013MV1100 |  | Excavation for Medium Voltage Trench - (RD-C-1/3)-Z7-C013-MV | 4d | 2027-04-12 | 2027-04-15 | RHD4ENSDZ7APPMV150, RHD4CZ7C013IRR3200 | -185d |
| RHD4CZ7C013MV1200 |  | Trench Backfilling for Medium Voltage Network - (RD-C-1/3)-Z7-C013-MV | 4d | 2027-04-26 | 2027-04-29 | RHD4CZ7C013MV3200 | -185d |
|  | 7277 | **RHD4-02-002-C013-(MV)-Medium Voltage cables 3Cx 500 mm²** |  | 2027-04-17 | 2027-05-02 |  |  |
| RHD4CZ7C013MV3100 |  | Installation of Medium Voltage Cables 3Cx 500 mm² - (RD-C-1/3)-Z7-C013-MV | 6d | 2027-04-17 | 2027-04-22 | RHD4PRSHLDOSMV1100, RHD4ENMSMV2000, RHD4ENMSMV2010, RHD4PRSHLSTAGMV1100, RHD4CZ7C013MV1100 | -185d |
| RHD4CZ7C013MV3200 |  | Joints Installation of Medium Voltage Cables 3Cx 500 mm² - (RD-C-1/3)-Z7-C013-MV | 2d | 2027-04-24 | 2027-04-25 | RHD4PRSHLDOSMV1300, RHD4PRSHLSTAGMV1300, RHD4CZ7C013MV3100 | -185d |
| RHD4CZ7C013MV3300 |  | Testing of Medium Voltage Cables 3Cx 500 mm² - (RD-C-1/3)-Z7-C013-MV | 2d | 2027-05-01 | 2027-05-02 | RHD4CZ7C013MV3200, RHD4CZ7C013MV1200 | -185d |
|  | 1791 | **RHD4-02-002-C013-(MV)-Medium Voltage duct banks** |  |  |  |  |  |
|  | 7281 | **RHD4-02-002-Z7-C013-Low Voltage Network - LV** |  |  |  |  |  |
|  | 7282 | **RHD4-02-002-C013-(LV)-Low Voltage duct banks** |  |  |  |  |  |

| ID | WBS | Task | Duration | Start | Finish | Predecessors | Complete | Total float |
| --- | --- | --- | --- | --- | --- | --- | --- | --- |
|  | 7287 | **RHD4-02-002-Z7-C013-Street Lighting Network - SL** |  | 2027-05-03 | 2027-06-03 |  |  |  |
|  | 7290 | **RHD4-02-002-C013-(SL)-Street Lighting cables** |  | 2027-05-03 | 2027-05-19 |  |  |  |
| RHD4CZ7C013SL3100 |  | Excavation for Street Lighting Cables for Street Lighting Network - (RD-C-1/3)-Z7-C013-SL | 3d | 2027-05-03 | 2027-05-05 | RHD4ENSDZ7APPSL170, RHD4CZ7L131ST3100, RHD4CZ7C013MV3300 |  | -117d |
| RHD4CZ7C013SL3200 |  | Cable Laying of Street Lighting Cables for Street Lighting Network - (RD-C-1/3)-Z7-C013-SL | 3d | 2027-05-06 | 2027-05-09 | RHD4PRSHLDOSSL1100, RHD4ENMSSL2000, RHD4ENMSSL2010, RHD4PRSHLSTAGSL1100, RHD4CZ7C013SL3100 |  | -117d |
| RHD4CZ7C013SL3300 |  | Warning tape and Backfill for Street Lighting Cables for Street Lighting Network - (RD-C-1/3)-Z7-C013-SL | 3d | 2027-05-10 | 2027-05-12 | RHD4CZ7C013SL3200 |  | -117d |
| RHD4CZ7C013SL3400 |  | Testing of Street Lighting Cables for Street Lighting Network - (RD-C-1/3)-Z7-C013-SL | 2d | 2027-05-13 | 2027-05-19 | RHD4CZ7C013SL3300 |  | -117d |
|  | 7291 | **RHD4-02-002-C013-(SL)-Street Lighting Poles** |  | 2027-05-20 | 2027-06-01 |  |  |  |
| RHD4CZ7C013SL1100 |  | Excavation for RC Base for Lighting Poles for Street Lighting Network - (RD-C-1/3)-Z7-C013-SL | 2d | 2027-05-20 | 2027-05-22 | RHD4ENSDZ7APPSL170, RHD4CZ7C013SL3400 |  | -117d |
| RHD4CZ7C013SL1200 |  | Installation for RC Base for Lighting Poles for Street Lighting Network - (RD-C-1/3)-Z7-C013-SL | 2d | 2027-05-23 | 2027-05-24 | RHD4CZ7C013SL1100 |  | -117d |
| RHD4CZ7C013SL1300 |  | Backfill for RC Base for Lighting Poles for Street Lighting Network - (RD-C-1/3)-Z7-C013-SL | 2d | 2027-05-25 | 2027-05-26 | RHD4CZ7C013SL1200 |  | -117d |
| RHD4CZ7C013SL1400 |  | Installation for Lighting Poles for Street Lighting Network - (RD-C-1/3)-Z7-C013-SL | 2d | 2027-05-27 | 2027-05-29 | RHD4PRSHLDOSSL1200, RHD4ENMSSL2000, RHD4ENMSSL2010, RHD4PRSHLSTAGSL1200, RHD4CZ7C013SL1300 |  | -117d |
| RHD4CZ7C013SL1500 |  | Luminaire Installation for Lighting Poles for Street Lighting Network - (RD-C-1/3)-Z7-C013-SL | 3d | 2027-05-30 | 2027-06-01 | RHD4PRSHLDOSSL1300, RHD4PRSHLSTAGSL1300, RHD4CZ7C013SL1400 |  | -117d |
|  | 7293 | **RHD4-02-002-C013-(SL)-Street Lighting Earthing System** |  | 2027-06-02 | 2027-06-03 |  |  |  |
| RHD4CZ7C013SL6100 |  | Installation of Earthing for Lighting Poles and Fedder Pillers for Street Lighting Network - (RD-C-1/3)-Z7-C013-SL | 2d | 2027-06-02 | 2027-06-03 | RHD4ENMSER2000, RHD4ENMSER2010, RHD4CZ7C013SL1500 |  | -117d |
|  | 7299 | **RHD4-02-002-Z7-C013-Telecommunications Network - TC** |  | 2027-06-05 | 2027-06-16 |  |  |  |
|  | 7300 | **RHD4-02-002-C013-(TC)-Telecommunications Ducts** |  | 2027-06-05 | 2027-06-16 |  |  |  |
| RHD4CZ7C013TC2100 |  | Excavation of HDPE Ducts for Telecom Network - (RD-C-1/3)-Z7-C013-TC | 3d | 2027-06-05 | 2027-06-07 | RHD4ENSDZ7APPTC190, RHD4CZ7C013SL6100 |  | -117d |
| RHD4CZ7C013TC2200 |  | Installation of HDPE Ducts for Telecom Network - (RD-C-1/3)-Z7-C013-TC | 5d | 2027-06-08 | 2027-06-13 | RHD4PRSHLDOSTC1000, RHD4PRSHLSTAGTC1000, RHD4CZ7C013TC2100 |  | -117d |
| RHD4CZ7C013TC2400 |  | Backfilling of HDPE Ducts for Telecom Network - (RD-C-1/3)-Z7-C013-TC | 3d | 2027-06-14 | 2027-06-16 | RHD4CZ7C013TC2200, RHD4CZ7C013TC5200 |  | -117d |
|  | 7301 | **RHD4-02-002-C013-(TC)-Telecommunications Manholes** |  | 2027-06-08 | 2027-06-12 |  |  |  |
| RHD4CZ7C013TC5100 |  | Excavation for Manholes for Telecom Network - (RD-C-1/3)-Z7-C013-TC | 2d | 2027-06-08 | 2027-06-09 | RHD4ENSDZ7APPTC190, RHD4CZ7C013TC2100 |  | -116d |
| RHD4CZ7C013TC5200 |  | Installation of Manholes for Telecom Network - (RD-C-1/3)-Z7-C013-TC | 2d | 2027-06-10 | 2027-06-12 | RHD4PRSHLDOSTC1200, RHD4PRSHLSTAGTC1200, RHD4CZ7C013TC5100, RHD4CZ7C013TC2200 SS |  | -116d |
|  | 7303 | **RHD4-02-002-Z7-C013-Information and Communication Technologies - ICT** |  | 2027-06-17 | 2027-07-11 |  |  |  |
|  | 7304 | **RHD4-02-002-C013-(ICT)-Information and Communication Technologies Ducts** |  | 2027-06-17 | 2027-07-11 |  |  |  |
| RHD4CZ7C013ICT2100 |  | Excavation of HDPE Ducts for ICT Network - (RD-C-1/3)-Z7-C013-ICT | 6d | 2027-06-17 | 2027-06-23 | RHD4ENSDZ7APPICT200, RHD4CZ7C013TC2400 |  | -117d |
| RHD4CZ7C013ICT2200 |  | Installation of HDPE Ducts for ICT Network - (RD-C-1/3)-Z7-C013-ICT | 9d | 2027-06-24 | 2027-07-04 | RHD4PRSHLDOSICT1000, RHD4PRSHLSTAGICT1000, RHD4CZ7C013ICT2100 |  | -117d |
| RHD4CZ7C013ICT2400 |  | Backfilling of HDPE Ducts for ICT Network - (RD-C-1/3)-Z7-C013-ICT | 6d | 2027-07-05 | 2027-07-11 | RHD4CZ7C013ICT2200, RHD4CZ7C013ICT5200 |  | -117d |
|  | 7305 | **RHD4-02-002-C013-(ICT)-Information and Communication Technologies Manholes** |  | 2027-06-24 | 2027-06-28 |  |  |  |
| RHD4CZ7C013ICT5100 |  | Excavation for Manholes for ICT Network - (RD-C-1/3)-Z7-C013-ICT | 2d | 2027-06-24 | 2027-06-26 | RHD4ENSDZ7APPICT200, RHD4CZ7C013ICT2100, RHD4CZ7C013MV3300 |  | -112d |
| RHD4CZ7C013ICT5200 |  | Installation of Manholes for ICT Network - (RD-C-1/3)-Z7-C013-ICT | 2d | 2027-06-27 | 2027-06-28 | RHD4PRSHLDOSICT1200, RHD4PRSHLSTAGICT1200, RHD4CZ7C013ICT5100 |  | -112d |
|  | 7294 | **RHD4-02-002-Z7-C013-Landscape Network - LS** |  |  |  |  |  |  |
|  | 7295 | **RHD4-02-002-C013-(LS)-Landscape Lighting cables** |  |  |  |  |  |  |
|  | 7297 | **RHD4-02-002-C013-(LS)-Landscape Bollard Poles** |  |  |  |  |  |  |
|  | 7307 | **RHD4-02-002-Z7-C013-Security Network - CCTV** |  |  |  |  |  |  |
|  | 7308 | **RHD4-02-002-C013-(CCTV)-Civil Works** |  |  |  |  |  |  |
|  | 6568 | **RHD4-02-002-Z7-L015** |  | 2026-07-05 | 2028-05-29 |  |  |  |
|  | 6599 | **RHD4-02-002-Z7-L015-Crossings Sewage Network - SWCr** |  |  |  |  |  |  |
|  | 6609 | **RHD4-02-002-L015-(SWCr)-MH Works - 1200 mm diameter** |  |  |  |  |  |  |
|  | 6605 | **RHD4-02-002-L015-(SWCr)-UPVC Pipes - 200 mm diameter** |  |  |  |  |  |  |
|  | 6643 | **RHD4-02-002-Z7-L015-Crossings Potable Network - PTCr** |  |  |  |  |  |  |
|  | 6644 | **RHD4-02-002-L015-(PTCr)-HDPE Pipes - 110 mm diameter** |  |  |  |  |  |  |
|  | 6649 | **RHD4-02-002-L015-(PTCr)-Gate Valves (Direct Buried)** |  |  |  |  |  |  |
|  | 6690 | **RHD4-02-002-Z7-L015-Crossings Irrigation Network - IRRC** |  |  |  |  |  |  |
|  | 6691 | **RHD4-02-002-L015-(IRRC)-HDPE Pipes - 160 mm diameter** |  |  |  |  |  |  |
|  | 6699 | **RHD4-02-002-L015-(IRRC)-Gate Valves (Direct Buried)** |  |  |  |  |  |  |
|  | 6747 | **RHD4-02-002-Z7-L015-Road Works - RD** |  | 2026-07-05 | 2028-05-29 |  |  |  |
|  | 6748 | **RHD4-02-002-L015-(RD)-Subgrade** |  | 2026-07-05 | 2026-08-03 |  |  |  |
| RHD4CZ7L015RD1100 |  | Supply, lay and compaction subgrade compacted thickness 300 mm for Roads - (RD-L-15)-Z7-L015-RD(Completed) | 6d | 2026-07-05 A | 2026-08-03 A | RHD4ENSDZ7APPRD220, RHD4ENSDZ7APPEW100 SS, RHD4CZ7L015ST1505 | 100% |  |
|  | 6749 | **RHD4-02-002-L015-(RD)-Aggregate Base Course** |  | 2027-02-11 | 2027-02-18 |  |  |  |
| RHD4CZ7L015RD2100 |  | Supply, lay and compaction Aggregate base course compacted thickness 300 mmfor Roads - (RD-L-15)-Z7-L015-RD | 6d | 2027-02-11 | 2027-02-18 | RHD4PRSHLDOSRD1000, RHD4PRSHLSTAGRD1000, RHD4CZ7L015RD1100 |  | -193.02d |
|  | 6750 | **RHD4-02-002-L015-(RD)-Bituminous base course Two Layers, including (MC1)&(RC2)** |  | 2027-02-18 | 2028-04-18 |  |  |  |
| RHD4CZ7L015RD3100 |  | Supply, lay and Asphaltic base course including Prime Coat (MC1) for 1st Layer - (RD-L-15)-Z7-L015-RD | 2d | 2027-02-18 | 2027-02-21 | RHD4PRSHLDOSRD1100, RHD4ENMSASPH2000, RHD4ENMSASPH2010, RHD4PRSHLSTAGRD1100, RHD4CZ7L015RD2100 |  | -193.02d |
| RHD4CZ7L015RD3200 |  | Supply, lay and Asphaltic base course including Tack Coat (RC2) for 2nd Layer - (RD-L-15)-Z7-L015-RD | 2d | 2028-04-16 | 2028-04-18 | RHD4PRSHLDOSRD1100, RHD4PRSHLSTAGRD1100, RHD4CZ7L015CCTV2100 |  | -177.02d |
|  | 6752 | **RHD4-02-002-L015-(RD)-Precast Concrete Curb** |  | 2028-04-18 | 2028-04-25 |  |  |  |
| RHD4CZ7L015RD5100 |  | Supply and installation Precast Concrete Kerb for Roads - (RD-L-15)-Z7-L015-RD | 6d | 2028-04-18 | 2028-04-25 | RHD4PRSHLDOSRD1200, RHD4ENMSRD2000, RHD4ENMSRD2010, RHD4PRSHLSTAGRD1200, RHD4CZ7L015RD3200, RHD4CZ7L131RD5100 |  | -156.02d |
|  | 6755 | **RHD4-02-002-L015-(RD)-Traffic Signage** |  | 2028-04-25 | 2028-05-08 |  |  |  |
| RHD4CZ7L015RD8100 |  | Installation of Traffic Signage for Road Network - (RD-L-15)-Z7-L015-RD | 8d | 2028-04-25 | 2028-05-08 | RHD4PRSHLDOSRD1600, RHD4PRSHLSTAGRD1600, RHD4CZ7L015RD5100, RHD4CZ7L015TC2400, RHD4CZ7L015ICT2400, RHD4CZ7L131RD8100 |  | -156.02d |
|  | 6753 | **RHD4-02-002-L015-(RD)-Precast Interlocking Block Pavers** |  | 2028-05-08 | 2028-05-16 |  |  |  |
| RHD4CZ7L015RD6100 |  | Interlocking block pavers for sidewalk-footpath for Side walks and Parking areas - (RD-L-15)-Z7-L015-RD | 7d | 2028-05-08 | 2028-05-16 | RHD4PRSHLDOSRD1300, RHD4PRSHLDOSRD1400, RHD4ENMSRD2000, RHD4ENMSRD2010, RHD4PRSHLSTAGRD1300, RHD4PRSHLSTAGRD1400, RHD4CZ7L015RD8100, RHD4CZ7L131RD6100 |  | -156.02d |
|  | 6751 | **RHD4-02-002-L015-(RD)-Bituminous concrete wearing course including tack coat (RC2)** |  | 2028-05-23 | 2028-05-25 |  |  |  |
| RHD4CZ7L015RD4100 |  | Supply, lay and compaction Asphaltic wearing course including tack Coat (RC2)for Road Network - (RD-L-15)-Z7-L015-RD | 2d | 2028-05-23 | 2028-05-25 | RHD4CZ7L015RD5100, RHD4CZ7L015RD6100, RHD4CZ7L131RD4100, RHD4CZ7L015CCTV6100 |  | -162.06d |
|  | 6754 | **RHD4-02-002-L015-(RD)-Pavement Marking** |  | 2028-05-25 | 2028-05-29 |  |  |  |
| RHD4CZ7L015RD7100 |  | Pavement Markings for Road Network - (RD-L-15)-Z7-L015-RD | 3d | 2028-05-25 | 2028-05-29 | RHD4PRSHLDOSRD1500, RHD4PRSHLSTAGRD1500, RHD4CZ7L015RD4100, RHD4CZ7L131RD7100 |  | -157.06d |
|  | 6572 | **RHD4-02-002-Z7-L015-Storm Network - ST** |  | 2026-08-04 | 2027-05-29 |  |  |  |
|  | 6577 | **RHD4-02-002-L015-(ST)-GRP Pipes - 800 mm diameter** |  | 2026-08-15 | 2027-05-19 |  |  |  |
| RHD4CZ7L015ST1104 |  | Excavation works for GRP Pipe Line 800 mm - (RD-L-15)-Z7-L015-ST | 2d | 2026-08-15 A | 2026-08-16 A | RHD4ENSDZ7APPST110, RHD4CZ7L015ST1105, RHD4CZ7L131ST1504, RHD4CZ7L015MV3300 | 100% |  |
| RHD4CZ7L015ST1204 |  | Bedding works for GRP Pipe Line 800 mm - (RD-L-15)-Z7-L015-ST | 2d | 2026-08-18 A | 2026-08-19 A | RHD4CZ7L015ST1104 | 100% |  |
| RHD4CZ7L015ST1304 |  | Installing for GRP Pipe Line 800 mm - (RD-L-15)-Z7-L015-ST | 2d | 2026-08-20 A | 2026-08-22 A | RHD4PRSHLSTAGST1006, RHD4CZ7L015ST1204, RHD4CZ7L015ST3301, RHD4PRSHLDOSST1606, RHD4PRSHLPOST1000, RHD4PRSHLDOSST1006, RHD4PRSHLDOSST1605, RHD4PRSHLDOSST1005 | 100% |  |
| RHD4CZ7L015ST1504 |  | Backfilling and warning tape works for GRP Pipe Line 800 mm - (RD-L-15)-Z7-L015-ST | 2d | 2026-09-19 A | 2027-05-19 | RHD4CZ7L015ST1404 | 50% | -83d |
| RHD4CZ7L015ST1404 |  | Primary Test for GRP Pipe Line 800 mm - (RD-L-15)-Z7-L015-ST | 2d | 2027-05-11 | 2027-05-12 | RHD4CZ7L015ST1304 |  | -83d |

| ID | WBS | Task | Duration | Start | Finish | Predecessors | Complete | Total float |
| --- | --- | --- | --- | --- | --- | --- | --- | --- |
|  | 5254 | **RHD4-02-002-L015-(ST)-GRP Pipes - 900 mm diameter** |  | 2026-08-29 | 2027-02-11 |  |  |  |
| RHD4CZ7L015ST1105 |  | Excavation works for GRP Pipe Line 900 mm - (RD-L-15)-Z7-L015-ST | 2d | 2026-08-29 A | 2026-08-30 A | RHD4ENSDZ7APPRD220, RHD4ENSDZ7APPEW100, RHD4CZ7L015RW3000, RHD4CZ7L131ST1105 SS | 100% |  |
| RHD4CZ7L015ST1205 |  | Bedding works for GRP Pipe Line 900 mm - (RD-L-15)-Z7-L015-ST | 2d | 2026-09-19 A | 2026-09-20 A | RHD4CZ7L015ST1105 | 100% |  |
| RHD4CZ7L015ST1305 |  | Installing for GRP Pipe Line 900 mm - (RD-L-15)-Z7-L015-ST | 2d | 2026-09-20 A | 2026-09-21 A | RHD4CZ7L015ST1205 | 100% |  |
| RHD4CZ7L015ST1505 |  | Backfilling and warning tape works for GRP Pipe Line 900 mm - (RD-L-15)-Z7-L015-ST | 2d | 2026-09-26 A | 2026-09-27 A | RHD4CZ7L015ST1405 | 100% |  |
| RHD4CZ7L015ST1405 |  | Primary Test for GRP Pipe Line 900 mm - (RD-L-15)-Z7-L015-ST | 2d | 2027-02-09 | 2027-02-11 | RHD4CZ7L015ST1305 |  | -193.02d |
|  | 6008 | **RHD4-02-002-L015-(ST)-GRP Pipes - 600 mm diameter** |  | 2026-08-20 | 2027-05-10 |  |  |  |
| RHD4CZ7L015ST1102 |  | Excavation works for GRP Pipe Line 600 mm - (RD-L-15)-Z7-L015-ST | 2d | 2026-08-20 A | 2027-04-25 | RHD4CZ7L015ST1103 | 37% | -95d |
| RHD4CZ7L015ST1202 |  | Bedding works for GRP Pipe Line 600 mm - (RD-L-15)-Z7-L015-ST | 2d | 2026-08-23 A | 2027-04-27 | RHD4CZ7L015ST1102 | 37% | -87d |
| RHD4CZ7L015ST1302 |  | Installing for GRP Pipe Line 600 mm - (RD-L-15)-Z7-L015-ST | 2d | 2026-08-25 A | 2027-04-29 | RHD4CZ7L015ST1202 | 37% | -87d |
| RHD4CZ7L015ST1502 |  | Backfilling and warning tape works for GRP Pipe Line 600 mm - (RD-L-15)-Z7-L015-ST | 2d | 2026-09-19 A | 2027-05-10 | RHD4CZ7L015ST1402, RHD4CZ7L015ST2500 FF | 37% | -79d |
| RHD4CZ7L015ST1402 |  | Primary Test for GRP Pipe Line 600 mm - (RD-L-15)-Z7-L015-ST | 2d | 2027-05-01 | 2027-05-02 | RHD4CZ7L015ST1302 |  | -87d |
|  | 6590 | **RHD4-02-002-L015-(ST)-MH Works - 1500 mm diameter** |  | 2026-08-04 | 2027-05-29 |  |  |  |
| RHD4CZ7L015ST3101 |  | Excavation and PC Blinding works for MH 1500 mm - (RD-L-15)-Z7-L015-ST | 7d | 2026-08-04 A | 2027-04-29 | RHD4ENSDZ7APPST110, RHD4ENMSST2000, RHD4CZ7L015ST2100 | 92% | -95d |
| RHD4CZ7L015ST3201 |  | Installation of Base for MH 1500 mm - (RD-L-15)-Z7-L015-ST | 7d | 2026-08-29 A | 2027-05-02 | RHD4PRSHLSTAGST1606, RHD4CZ7L015ST3101 | 69% | -93d |
| RHD4CZ7L015ST3301 |  | MH Ring and C.Slab works and Backfilling works for MH 1500 mm - (RD-L-15)-Z7-L015-ST | 7d | 2027-05-03 | 2027-05-10 | RHD4PRSHLDOSST1606, RHD4CZ7L015ST3201 |  | -93d |
| RHD4CZ7L015ST3401 |  | Steel Cover for MH 1500 mm - (RD-L-15)-Z7-L015-ST | 5d | 2027-05-11 | 2027-05-20 | RHD4PRSHLDOSST1706, RHD4PRSHLSTAGST1706, RHD4CZ7L015ST3301 |  | -93d |
| RHD4CZ7L015ST3501 |  | Finishing, Benching, Testing works for MH 1500 mm - (RD-L-15)-Z7-L015-ST | 7d | 2027-05-22 | 2027-05-29 | RHD4CZ7L015ST3401 |  | -93d |
|  | 6589 | **RHD4-02-002-L015-(ST)-MH Works - 1200 mm diameter** |  | 2026-08-04 | 2027-05-06 |  |  |  |
| RHD4CZ7L015ST3100 |  | Excavation and PC Blinding works for MH 1200 mm - (RD-L-15)-Z7-L015-ST | 2d | 2026-08-04 A | 2026-10-24 A | RHD4ENSDZ7APPST110, RHD4ENMSST2000, RHD4ENMSST2010, RHD4CZ7L015ST3101 | 100% |  |
| RHD4CZ7L015ST3200 |  | Installation of Base for MH 1200 mm - (RD-L-15)-Z7-L015-ST | 2d | 2026-09-12 A | 2026-10-25 A | RHD4PRSHLSTAGST1606, RHD4CZ7L015ST3100 | 100% |  |
| RHD4CZ7L015ST3300 |  | MH Ring and C.Slab works and Backfilling works for MH 1200 mm - (RD-L-15)-Z7-L015-ST | 2d | 2027-05-01 | 2027-05-02 | RHD4PRSHLDOSST1606, RHD4CZ7L015ST3200 |  | -95d |
| RHD4CZ7L015ST3400 |  | Steel Cover for MH 1200 mm - (RD-L-15)-Z7-L015-ST | 2d | 2027-05-03 | 2027-05-04 | RHD4PRSHLDOSST1706, RHD4PRSHLSTAGST1706, RHD4CZ7L015ST3300 |  | -95d |
| RHD4CZ7L015ST3500 |  | Finishing, Benching, Testing works for MH 1200 mm - (RD-L-15)-Z7-L015-ST | 2d | 2027-05-05 | 2027-05-06 | RHD4CZ7L015ST3400 |  | -95d |
|  | 6576 | **RHD4-02-002-L015-(ST)-GRP Pipes - 700 mm diameter** |  | 2026-08-18 | 2027-05-22 |  |  |  |
| RHD4CZ7L015ST1103 |  | Excavation works for GRP Pipe Line 700 mm - (RD-L-15)-Z7-L015-ST | 2d | 2026-08-18 A | 2027-04-22 | RHD4ENSDZ7APPST110, RHD4CZ7L015ST1104 | 61% | -95d |
| RHD4CZ7L015ST1203 |  | Bedding works for GRP Pipe Line 700 mm - (RD-L-15)-Z7-L015-ST | 2d | 2026-09-15 A | 2027-04-25 | RHD4CZ7L015ST1103 | 61% | -70d |
| RHD4CZ7L015ST1303 |  | Installing for GRP Pipe Line 700 mm - (RD-L-15)-Z7-L015-ST | 2d | 2026-09-16 A | 2027-05-12 | RHD4PRSHLSTAGST1006, RHD4CZ7L015ST1203, RHD4CZ7L015ST3301, RHD4PRSHLDOSST1606, RHD4PRSHLPOST1000, RHD4PRSHLDOSST1006, RHD4PRSHLDOSST1605, RHD4PRSHLDOSST1005 | 61% | -83d |
| RHD4CZ7L015ST1503 |  | Backfilling and warning tape works for GRP Pipe Line 700 mm - (RD-L-15)-Z7-L015-ST | 2d | 2026-09-17 A | 2027-05-22 | RHD4CZ7L015ST1403, RHD4CZ7L015ST1504, RHD4CZ7L015ST1502 | 61% | -83d |
| RHD4CZ7L015ST1403 |  | Primary Test for GRP Pipe Line 700 mm - (RD-L-15)-Z7-L015-ST | 2d | 2027-05-13 | 2027-05-19 | RHD4CZ7L015ST1303 |  | -83d |
|  | 6574 | **RHD4-02-002-L015-(ST)-GRP Pipes - 500 mm diameter** |  |  |  |  |  |  |
|  | 6573 | **RHD4-02-002-L015-(ST)-GRP Pipes - 400 mm diameter** |  |  |  |  |  |  |
|  | 6587 | **RHD4-02-002-L015-(ST)-UPVC Pipes - 300 mm diameter** |  | 2026-09-19 | 2027-05-10 |  |  |  |
| RHD4CZ7L015ST2100 |  | Excavation works for UPVC Pipe Line 300 mm - (RD-L-15)-Z7-L015-ST | 3d | 2026-09-19 A | 2027-04-28 | RHD4ENSDZ7APPST110, RHD4CZ7L015ST1102 | 100% | -95d |
| RHD4CZ7L015ST2200 |  | Bedding works for UPVC Pipe Line 300 mm - (RD-L-15)-Z7-L015-ST | 2d | 2027-04-29 | 2027-05-01 | RHD4CZ7L015ST2100 |  | -79d |
| RHD4CZ7L015ST2300 |  | Installing for UPVC Pipe Line 300 mm - (RD-L-15)-Z7-L015-ST | 3d | 2027-05-02 | 2027-05-04 | RHD4PRSHLDOSST1106, RHD4PRSHLSTAGST1106, RHD4CZ7L015ST2200 |  | -79d |
| RHD4CZ7L015ST2400 |  | Primary Test for UPVC Pipe Line 300 mm - (RD-L-15)-Z7-L015-ST | 2d | 2027-05-05 | 2027-05-06 | RHD4CZ7L015ST2300 |  | -79d |
| RHD4CZ7L015ST2500 |  | Backfilling and warning tape works for UPVC Pipe Line 300 mm - (RD-L-15)-Z7-L015-ST | 3d | 2027-05-08 | 2027-05-10 | RHD4CZ7L015ST2400, RHD4CZ7L015ST6100 |  | -79d |
|  | 6595 | **RHD4-02-002-L015-(ST)-Concrete Encasement** |  | 2027-05-02 | 2027-05-03 |  |  |  |
| RHD4CZ7L015ST6100 |  | Pipe Encasement for Storm Pipelines - (RD-L-15)-Z7-L015-ST | 2d | 2027-05-02 | 2027-05-03 | RHD4CZ7L015ST2200 |  | -76d |
|  | 6596 | **RHD4-02-002-Z7-L015-Catch Basin - ST** |  | 2026-09-19 | 2027-05-26 |  |  |  |
|  | 6597 | **RHD4-02-002-L015-(ST)-Single Catch Basin Works** |  | 2026-09-19 | 2027-05-26 |  |  |  |
| RHD4CZ7L015ST7100 |  | Excavation works for Single Catch Basin - (RD-L-15)-Z7-L015-ST | 3d | 2026-09-19 A | 2027-05-03 | RHD4ENSDZ7APPST110, RHD4CZ7L015ST3100 | 70% | -87d |
| RHD4CZ7L015ST7200 |  | PC Blinding, Installation and Pipe connection for Single Catch Basin - (RD-L-15)-Z7-L015-ST | 3d | 2026-09-22 A | 2027-05-06 | RHD4CZ7L015ST7100 | 37% | -87d |
| RHD4CZ7L015ST7300 |  | Rings & C.Slab & Final Backfill for Single Catch Basin - (RD-L-15)-Z7-L015-ST | 4d | 2026-10-24 A | 2027-05-11 | RHD4PRSHLDOSST1306, RHD4PRSHLSTAGST1306, RHD4CZ7L015ST7200 | 4% | -87d |
| RHD4CZ7L015ST7400 |  | Steel Cover for Single Catch Basin - (RD-L-15)-Z7-L015-ST | 3d | 2027-05-12 | 2027-05-19 | RHD4PRSHLDOSST1706, RHD4CZ7L015ST7300 |  | -87d |
| RHD4CZ7L015ST7500 |  | Finishing and Insulation works for Single Catch Basin - (RD-L-15)-Z7-L015-ST | 6d | 2027-05-20 | 2027-05-26 | RHD4CZ7L015ST7400 |  | -87d |
|  | 6621 | **RHD4-02-002-Z7-L015-Sewage Network - SW** |  | 2026-08-09 | 2027-07-03 |  |  |  |
|  | 6627 | **RHD4-02-002-L015-(SW)-UPVC Pipes - 200 mm diameter** |  | 2026-08-12 | 2027-05-30 |  |  |  |
| RHD4CZ7L015SW2100 |  | Excavation works for UPVC Pipe Line 200 mm - (RD-L-15)-Z7-L015-SW | 4d | 2026-08-12 A | 2026-09-15 A | RHD4ENSDZ7APPSW120, RHD4CZ7L015ST7500, RHD4CZ7L015ST1503 | 100% |  |
| RHD4CZ7L015SW2200 |  | Bedding works for UPVC Pipe Line 200 mm - (RD-L-15)-Z7-L015-SW | 4d | 2026-08-13 A | 2026-09-16 A | RHD4CZ7L015SW2100 | 100% |  |
| RHD4CZ7L015SW2300 |  | Installing for UPVC Pipe Line 200 mm - (RD-L-15)-Z7-L015-SW | 5d | 2026-08-15 A | 2026-09-17 A | RHD4PRSHLSTAGSW1006, RHD4CZ7L015SW2200, RHD4PRSHLPOSW1000, RHD4PRSHLDOSSW1006, RHD4PRSHLDOSSW1306, RHD4PRSHLPOSW1100, RHD4PRSHLDOSSW1106, RHD4PRSHLDOSSW1004, RHD4PRSHLDOSSW1304, RHD4PRSHLDOSSW1104 | 100% |  |
| RHD4CZ7L015SW2500 |  | Backfilling and warning tape works for UPVC Pipe Line 200 mm - (RD-L-15)-Z7-L015-SW | 5d | 2026-10-27 A | 2026-11-01 A | RHD4CZ7L015SW2400, RHD4CZ7L015ST1502 | 100% |  |
| RHD4CZ7L015SW2400 |  | Primary Test for UPVC Pipe Line 200 mm - (RD-L-15)-Z7-L015-SW | 3d | 2026-10-31 A | 2027-05-30 | RHD4CZ7L015SW2300 | 21% | -87d |
|  | 6631 | **RHD4-02-002-L015-(SW)-MH Works - 1200 mm diameter** |  | 2026-08-09 | 2027-07-03 |  |  |  |
| RHD4CZ7L015SW3100 |  | Excavation and PC Blinding works for MH 1200 mm - (RD-L-15)-Z7-L015-SW | 11d | 2026-08-09 A | 2026-09-22 A | RHD4ENSDZ7APPSW120, RHD4CZ7L015SW2100 | 100% |  |
| RHD4CZ7L015SW3200 |  | Installation of Base for MH 1200 mm - (RD-L-15)-Z7-L015-SW | 12d | 2026-08-10 A | 2026-10-20 A | RHD4CZ7L015SW3100 | 100% |  |
| RHD4CZ7L015SW3300 |  | MH Ring and C.Slab works and Backfilling works for MH 1200 mm - (RD-L-15)-Z7-L015-SW | 12d | 2027-05-27 | 2027-06-09 | RHD4PRSHLDOSSW1306, RHD4PRSHLSTAGSW1306, RHD4CZ7L015SW3200 |  | -66d |
| RHD4CZ7L015SW3400 |  | Steel Cover for MH 1200 mm - (RD-L-15)-Z7-L015-SW | 8d | 2027-06-10 | 2027-06-19 | RHD4PRSHLDOSSW1406, RHD4PRSHLSTAGSW1406, RHD4CZ7L015SW3300 |  | -66d |
| RHD4CZ7L015SW3500 |  | Finishing, Benching, Testing works for MH 1200 mm - (RD-L-15)-Z7-L015-SW | 12d | 2027-06-20 | 2027-07-03 | RHD4CZ7L015SW3400 |  | -66d |
|  | 6658 | **RHD4-02-002-Z7-L015-Potable Network - PT** |  | 2027-05-31 | 2027-10-04 |  |  |  |
|  | 6659 | **RHD4-02-002-L015-(PT)-HDPE Pipes - 110 mm diameter** |  | 2027-06-05 | 2027-09-01 |  |  |  |
| RHD4CZ7L015PT1100 |  | Excavation works for HDPE Pipline 110 mm - (RD-L-15)-Z7-L015-PT | 2d | 2027-06-05 | 2027-06-06 | RHD4ENSDZ7APPPT130, RHD4ENMSPT2000, RHD4CZ7L015PT1101 |  | -87d |
| RHD4CZ7L015PT1200 |  | Bedding works for HDPE Pipline 110 mm - (RD-L-15)-Z7-L015-PT | 2d | 2027-06-08 | 2027-06-09 | RHD4CZ7L015PT1100, RHD4CZ7L015PT1201 |  | -73d |
| RHD4CZ7L015PT1300 |  | Installing for HDPE Pipline 110 mm - (RD-L-15)-Z7-L015-PT | 2d | 2027-06-15 | 2027-06-16 | RHD4PRSHLDOSPT1000, RHD4PRSHLSTAGPT1000, RHD4CZ7L015PT1200, RHD4CZ7L015PT1301 |  | -77d |
| RHD4CZ7L015PT1400 |  | Primary Test for HDPE Pipline 110 mm - (RD-L-15)-Z7-L015-PT | 2d | 2027-08-25 | 2027-08-28 | RHD4CZ7L015PT1300, RHD4CZ7L015PT1401, RHD4CZ7L015PT5100 |  | -129.02d |
| RHD4CZ7L015PT1500 |  | Backfilling and warning tape works for HDPE Pipline 110 mm - (RD-L-15)-Z7-L015-PT | 2d | 2027-08-30 | 2027-09-01 | RHD4CZ7L015PT1400, RHD4CZ7L015PT1501 |  | -131.02d |
|  | 6660 | **RHD4-02-002-L015-(PT)-HDPE Pipes - 160 mm diameter** |  | 2027-05-31 | 2027-08-30 |  |  |  |
| RHD4CZ7L015PT1101 |  | Excavation works for HDPE Pipline 160 mm - (RD-L-15)-Z7-L015-PT | 4d | 2027-05-31 | 2027-06-03 | RHD4ENSDZ7APPPT130, RHD4ENMSPT2000, RHD4CZ7L015SW2400 |  | -87d |
| RHD4CZ7L015PT1201 |  | Bedding works for HDPE Pipline 160 mm - (RD-L-15)-Z7-L015-PT | 3d | 2027-06-05 | 2027-06-07 | RHD4CZ7L015PT1101 |  | -77d |

| ID | WBS | Task | Duration | Start | Finish | Predecessors | Total float |
| --- | --- | --- | --- | --- | --- | --- | --- |
| RHD4CZ7L015PT1301 |  | Installing for HDPE Pipline 160 mm - (RD-L-15)-Z7-L015-PT | 6d | 2027-06-08 | 2027-06-14 | RHD4PRSHLDOSPT1000, RHD4PRSHLSTAGPT1000, RHD4CZ7L015PT1201 | -77d |
| RHD4CZ7L015PT1401 |  | Primary Test for HDPE Pipline 160 mm - (RD-L-15)-Z7-L015-PT | 2d | 2027-08-23 | 2027-08-25 | RHD4CZ9L02PT4500, RHD4CZ7L015PT1301, RHD4CZ7L015PT5100 | -131.02d |
| RHD4CZ7L015PT1501 |  | Backfilling and warning tape works for HDPE Pipline 160 mm - (RD-L-15)-Z7-L015-PT | 4d | 2027-08-25 | 2027-08-30 | RHD4CZ7L015PT1401 | -131.02d |
|  | 6664 | **RHD4-02-002-L015-(PT)-Gate Valves (Direct Buried)** |  | 2027-06-15 | 2027-09-04 |  |  |
| RHD4CZ7L015PT3100 |  | Installation for Direct Buried Gate Valves - (RD-L-15)-Z7-L015-PT | 2d | 2027-06-15 | 2027-06-16 | RHD4PRSHLDOSPT1200, RHD4PRSHLSTAGPT1200, RHD4CZ7L015PT1301 FF, RHD4CZ7L015PT1300 FF, RHD4CZ7L015PT1301 SS, RHD4CZ7L015PT1300 SS | -66d |
| RHD4CZ7L015PT3200 |  | Stem and Service box for Direct Buried Gate Valves - (RD-L-15)-Z7-L015-PT | 2d | 2027-09-01 | 2027-09-04 | RHD4PRSHLDOSPT1300, RHD4PRSHLSTAGPT1300, RHD4CZ7L015PT3100, RHD4CZ7L015PT1501, RHD4CZ7L015PT1500 | -131.02d |
|  | 6667 | **RHD4-02-002-L015-(PT)-Wash out Valve Chambers** |  | 2027-08-30 | 2027-09-08 |  |  |
| RHD4CZ7L015PT2101 |  | Excavation and Bedding for Wash out Valve Chambers for Potable Water Network - (RD-L-15)-Z7-L015-PT | 2d | 2027-08-30 | 2027-09-01 | RHD4ENSDZ7APPPT130, RHD4CZ7L015PT1501 | -119.02d |
| RHD4CZ7L015PT2201 |  | PC works for Wash out Valve Chambers for Potable Water Network - (RD-L-15)-Z7-L015-PT | 2d | 2027-09-01 | 2027-09-04 | RHD4CZ7L015PT2101 | -119.02d |
| RHD4CZ7L015PT2301 |  | Installation for Wash out Valve Chambers for Potable Water Network - (RD-L-15)-Z7-L015-PT | 2d | 2027-09-04 | 2027-09-06 | RHD4PRSHLDOSPT1100, RHD4PRSHLDOSPT1400, RHD4PRSHLSTAGPT1100, RHD4PRSHLSTAGPT1400, RHD4CZ7L015PT2201 | -119.02d |
| RHD4CZ7L015PT2401 |  | Backfilling works for Wash out Valve Chambers for Potable Water Network - (RD-L-15)-Z7-L015-PT | 2d | 2027-09-06 | 2027-09-08 | RHD4CZ7L015PT2301 | -119.02d |
|  | 6668 | **RHD4-02-002-L015-(PT)-Wash out Valves** |  | 2027-09-06 | 2027-09-11 |  |  |
| RHD4CZ7L015PT3102 |  | Installation for Wash out Valves for Potable Water Network - (RD-L-15)-Z7-L015-PT | 2d | 2027-09-06 | 2027-09-08 | RHD4PRSHLDOSPT1200, RHD4PRSHLSTAGPT1200, RHD4CZ7L015PT2301 | -119.02d |
| RHD4CZ7L015PT3202 |  | Stem and Service box for Wash out Valves for Potable Water Network - (RD-L-15)-Z7-L015-PT | 2d | 2027-09-08 | 2027-09-11 | RHD4PRSHLDOSPT1300, RHD4PRSHLSTAGPT1300, RHD4CZ7L015PT3102, RHD4CZ7L015PT2401 | -119.02d |
|  | 6671 | **RHD4-02-002-L015-(PT)-Fire Hydrant** |  | 2027-09-11 | 2027-10-04 |  |  |
| RHD4CZ7L015PT4100 |  | Excavation and Bedding and Pipe Installation for Fire Hydrant - (RD-L-15)-Z7-L015-PT | 5d | 2027-09-11 | 2027-09-16 | RHD4ENSDZ7APPPT130, RHD4CZ7L015PT3202, RHD4CZ7L015PT1501, RHD4CZ7L015PT1500 | -119.02d |
| RHD4CZ7L015PT4200 |  | Valve Installation for Fire Hydrant - (RD-L-15)-Z7-L015-PT | 4d | 2027-09-16 | 2027-09-21 | RHD4CZ7L015PT4100 | -119.02d |
| RHD4CZ7L015PT4300 |  | Stem for Fire Hydrant - (RD-L-15)-Z7-L015-PT | 4d | 2027-09-21 | 2027-09-27 | RHD4CZ7L015PT4200 | -119.02d |
| RHD4CZ7L015PT4400 |  | Fire Installation for Fire Hydrant - (RD-L-15)-Z7-L015-PT | 4d | 2027-09-27 | 2027-10-02 | RHD4PRSHLDOSPT1500, RHD4PRSHLSTAGPT1500, RHD4CZ7L015PT4300 | -119.02d |
| RHD4CZ7L015PT4500 |  | Protection Barriers for Fire Hydrant - (RD-L-15)-Z7-L015-PT | 2d | 2027-10-02 | 2027-10-04 | RHD4CZ7L015PT4400 | -119.02d |
|  | 6672 | **RHD4-02-002-L015-(PT)-Concrete Encasement** |  | 2027-06-15 | 2027-06-20 |  |  |
| RHD4CZ7L015PT5100 |  | Pipe Encasement for Potable Pipelines - (RD-L-15)-Z7-L015-PT | 5d | 2027-06-15 | 2027-06-20 | RHD4CZ7L015PT1301 FF, RHD4CZ7L015PT1300 FF, RHD4CZ7L015PT1301 SS, RHD4CZ7L015PT1300 SS, RHD4CZ7L015PT1201, RHD4CZ7L015PT1200 | -77d |
|  | 6673 | **RHD4-02-002-Z7-L015-Irrigation Network - IRR** |  | 2027-06-07 | 2027-11-24 |  |  |
|  | 6674 | **RHD4-02-002-L015-(IRR)-HDPE Pipes - 160 mm diameter** |  | 2027-06-07 | 2027-07-04 |  |  |
| RHD4CZ7L015IRR1100 |  | Excavation works for HDPE Pipline 160 mm - (RD-L-15)-Z7-L015-IRR | 6d | 2027-06-07 | 2027-06-13 | RHD4ENSDZ7APPIRR140, RHD4ENMSRR2000, RHD4CZ7L015PT1101, RHD4CZ7L015PT1100 | -87d |
| RHD4CZ7L015IRR1200 |  | Bedding works for HDPE Pipline 160 mm - (RD-L-15)-Z7-L015-IRR | 5d | 2027-06-14 | 2027-06-19 | RHD4CZ7L015IRR1100 | -87d |
| RHD4CZ7L015IRR1300 |  | Installing for HDPE Pipline 160 mm - (RD-L-15)-Z7-L015-IRR | 6d | 2027-06-20 | 2027-06-26 | RHD4PRSHLDOSIRR1000, RHD4PRSHLSTAGIRR1000, RHD4CZ7L015IRR1200 | -87d |
| RHD4CZ7L015IRR1400 |  | Primary Test for HDPE Pipline 160 mm - (RD-L-15)-Z7-L015-IRR | 2d | 2027-06-27 | 2027-06-28 | RHD4CZ7L015IRR1300 | -87d |
| RHD4CZ7L015IRR1500 |  | Backfilling and warning tape works for HDPE Pipline 160 mm - (RD-L-15)-Z7-L015-IRR | 5d | 2027-06-29 | 2027-07-04 | RHD4CZ7L015IRR1400 | -87d |
|  | 6680 | **RHD4-02-002-L015-(IRR)-HDPE Pipes - 450 mm diameter** |  |  |  |  |  |
|  | 6682 | **RHD4-02-002-L015-(IRR)-Gate Valves (Direct Buried)** |  | 2027-06-24 | 2027-07-06 |  |  |
| RHD4CZ7L015IRR3100 |  | Installation for Direct Buried Gate Valves - (RD-L-15)-Z7-L015-IRR | 2d | 2027-06-24 | 2027-06-26 | RHD4PRSHLDOSIRR1100, RHD4PRSHLSTAGIRR1100, RHD4CZ7L015IRR1300 SS, RHD4CZ7L015IRR1300 FF | -66d |
| RHD4CZ7L015IRR3200 |  | Stem and Service box for Direct Buried Gate Valves - (RD-L-15)-Z7-L015-IRR | 2d | 2027-07-05 | 2027-07-06 | RHD4PRSHLDOSIRR1300, RHD4PRSHLSTAGIRR1300, RHD4CZ7L015IRR3100, RHD4CZ7L015IRR1500 | -73d |
|  | 6685 | **RHD4-02-002-L015-(IRR)-Wash out Chamber** |  | 2027-07-05 | 2027-07-13 |  |  |
| RHD4CZ7L015IRR2101 |  | Excavation and Bedding for Wash out Chamber for Irrigation Network - (RD-L-15)-Z7-L015-IRR | 2d | 2027-07-05 | 2027-07-06 | RHD4ENSDZ7APPIRR140, RHD4CZ7L015IRR1500 | -77d |
| RHD4CZ7L015IRR2201 |  | PC works for Wash out Chamber for Irrigation Network - (RD-L-15)-Z7-L015-IRR | 2d | 2027-07-07 | 2027-07-08 | RHD4CZ7L015IRR2101 | -77d |
| RHD4CZ7L015IRR2301 |  | Installation for Wash out Chamber for Irrigation Network - (RD-L-15)-Z7-L015-IRR | 2d | 2027-07-10 | 2027-07-11 | RHD4PRSHLDOSIRR1200, RHD4PRSHLDOSIRR1400, RHD4PRSHLSTAGIRR1200, RHD4PRSHLSTAGIRR1400, RHD4CZ7L015IRR2201 | -77d |
| RHD4CZ7L015IRR2401 |  | Backfilling works for Wash out Chamber for Irrigation Network - (RD-L-15)-Z7-L015-IRR | 2d | 2027-07-12 | 2027-07-13 | RHD4CZ7L015IRR2301 | -77d |
|  | 6686 | **RHD4-02-002-L015-(IRR)-Wash out Valves** |  | 2027-11-20 | 2027-11-24 |  |  |
| RHD4CZ7L015IRR3102 |  | Installation for Wash out Valve for Irrigation Network - (RD-L-15)-Z7-L015-IRR | 2d | 2027-11-20 | 2027-11-22 | RHD4CZ4C012RD8100, RHD4PRSHLDOSIRR1100, RHD4PRSHLSTAGIRR1100, RHD4CZ7L015IRR2301, RHD4CZ7L015IRR3200 | -188.02d |
| RHD4CZ7L015IRR3202 |  | Stem and Service box for Wash out Valve for Irrigation Network - (RD-L-15)-Z7-L015-IRR | 2d | 2027-11-22 | 2027-11-24 | RHD4PRSHLDOSIRR1300, RHD4PRSHLSTAGIRR1300, RHD4CZ7L015IRR3102, RHD4CZ7L015IRR2401 | -188.02d |
|  | 6687 | **RHD4-02-002-L015-(IRR)-Air Valve Chamber** |  | 2027-07-05 | 2027-07-13 |  |  |
| RHD4CZ7L015IRR2102 |  | Excavation and Bedding for Valve Chamber for Irrigation Network - (RD-L-15)-Z7-L015-IRR | 2d | 2027-07-05 | 2027-07-06 | RHD4ENSDZ7APPIRR140, RHD4CZ7L015IRR1500 | -87d |
| RHD4CZ7L015IRR2202 |  | PC works for Valve Chamber for Irrigation Network - (RD-L-15)-Z7-L015-IRR | 2d | 2027-07-07 | 2027-07-08 | RHD4CZ7L015IRR2102 | -87d |
| RHD4CZ7L015IRR2302 |  | Installation for Valve Chamber for Irrigation Network - (RD-L-15)-Z7-L015-IRR | 2d | 2027-07-10 | 2027-07-11 | RHD4PRSHLDOSIRR1200, RHD4PRSHLDOSIRR1400, RHD4PRSHLSTAGIRR1200, RHD4PRSHLSTAGIRR1400, RHD4CZ7L015IRR2202 | -87d |
| RHD4CZ7L015IRR2402 |  | Backfilling works for Valve Chamber for Irrigation Network - (RD-L-15)-Z7-L015-IRR | 2d | 2027-07-12 | 2027-07-13 | RHD4CZ7L015IRR2302 | -87d |
|  | 6688 | **RHD4-02-002-L015-(IRR)-Air Valves** |  | 2027-07-12 | 2027-09-06 |  |  |
| RHD4CZ7L015IRR3103 |  | Installation for Air Valves for Irrigation Network - (RD-L-15)-Z7-L015-IRR | 2d | 2027-07-12 | 2027-07-13 | RHD4PRSHLDOSIRR1100, RHD4PRSHLSTAGIRR1100, RHD4CZ7L015IRR2302 | -87d |
| RHD4CZ7L015IRR3203 |  | Stem and Service box for Air Valves for Irrigation Network - (RD-L-15)-Z7-L015-IRR | 2d | 2027-09-04 | 2027-09-06 | RHD4PRSHLDOSIRR1300, RHD4PRSHLSTAGIRR1300, RHD4CZ7L015IRR3103, RHD4CZ7L015IRR2402, RHD4CZ7L015PT3200, RHD4CZ7L015PT3200 FF | -131.02d |
|  | 6707 | **RHD4-02-002-Z7-L015-Medium Voltage Network - MV** |  | 2027-02-21 | 2027-04-17 |  |  |
|  | 6708 | **RHD4-02-002-L015-(MV)-Medium Voltage cable trench** |  | 2027-02-21 | 2027-04-13 |  |  |
| RHD4CZ7L015MV1100 |  | Excavation for Medium Voltage Trench - (RD-L-15)-Z7-L015-MV | 14d | 2027-02-21 | 2027-03-14 | RHD4ENSDZ7APPMV150, RHD4CZ7L015RD3100 | -94.02d |
| RHD4CZ7L015MV1200 |  | Trench Backfilling for Medium Voltage Network - (RD-L-15)-Z7-L015-MV | 14d | 2027-03-28 | 2027-04-13 | RHD4CZ7L015MV3200 | -94.02d |
|  | 6709 | **RHD4-02-002-L015-(MV)-Medium Voltage duct banks** |  | 2027-02-21 | 2027-03-08 |  |  |
| RHD4CZ7L015MV2100 |  | Excavation of Duct Banks for Medium Voltage Network - (RD-L-15)-Z7-L015-MV | 3d | 2027-02-21 | 2027-02-25 | RHD4ENSDZ7APPMV150, RHD4CZ7L015RD3100 | -193.02d |
| RHD4CZ7L015MV2200 |  | Installation of Duct Banks for Medium Voltage Network - (RD-L-15)-Z7-L015-MV | 4d | 2027-02-25 | 2027-03-02 | RHD4PRSHLDOSMV1000, RHD4PRSHLSTAGMV1000, RHD4CZ7L015MV2100 | -92.02d |
| RHD4CZ7L015MV2300 |  | Pouring of Duct Banks for Medium Voltage Network - (RD-L-15)-Z7-L015-MV | 3d | 2027-03-02 | 2027-03-06 | RHD4CZ7L015MV2200 | -92.02d |
| RHD4CZ7L015MV2400 |  | Backfilling of Duct Banks for Medium Voltage Network - (RD-L-15)-Z7-L015-MV | 2d | 2027-03-06 | 2027-03-08 | RHD4CZ7L015MV2300 | -92.02d |
|  | 6710 | **RHD4-02-002-L015-(MV)-Medium Voltage cables 3Cx 500 mm²** |  | 2027-03-14 | 2027-04-17 |  |  |
| RHD4CZ7L015MV3100 |  | Installation of Medium Voltage Cables 3Cx 500 mm² - (RD-L-15)-Z7-L015-MV | 10d | 2027-03-14 | 2027-03-25 | RHD4PRSHLDOSMV1100, RHD4ENMSMV2000, RHD4ENMSMV2010, RHD4PRSHLSTAGMV1100, RHD4CZ7L015MV1100, RHD4CZ7L015MV2400 | -94.02d |
| RHD4CZ7L015MV3200 |  | Joints Installation of Medium Voltage Cables 3Cx 500 mm² - (RD-L-15)-Z7-L015-MV | 2d | 2027-03-25 | 2027-03-28 | RHD4PRSHLDOSMV1300, RHD4PRSHLSTAGMV1300, RHD4CZ7L015MV3100 | -94.02d |
| RHD4CZ7L015MV3300 |  | Testing of Medium Voltage Cables 3Cx 500 mm² - (RD-L-15)-Z7-L015-MV | 3d | 2027-04-13 | 2027-04-17 | RHD4CZ7L015MV3200, RHD4CZ7L015MV1200 | -94.02d |
|  | 6714 | **RHD4-02-002-Z7-L015-Low Voltage Network - LV** |  | 2027-09-06 | 2027-11-27 |  |  |
|  | 6715 | **RHD4-02-002-L015-(LV)-Low Voltage duct banks** |  |  |  |  |  |
|  | 4257 | **RHD4-02-002-L015-(LV)-Low Voltage Drawpit** |  | 2027-09-06 | 2027-09-11 |  |  |
| RHD4CZ7L015LV5100 |  | Excavation of Drawpit size 900x900x1000mm for Low Voltage Network - (RD-L-15)-Z7-L015-LV | 2d | 2027-09-06 | 2027-09-08 | RHD4CZ7L015MV2100 SS, RHD4CZ7L015MV3300, RHD4CZ7L015IRR3203 | -131.02d |
| RHD4CZ7L015LV5200 |  | Installation of Drawpit size 900x900x1000mm for Low Voltage Network - (RD-L-15)-Z7-L015-LV | 2d | 2027-09-08 | 2027-09-11 | RHD4CZ7L015LV5100 | -131.02d |
|  | 4258 | **RHD4-02-002-L015-(LV)-Low Voltage cables** |  | 2027-09-11 | 2027-11-27 |  |  |
| RHD4CZ7L015LV3100 |  | Excavation for Low Voltage Cables for Low Voltage Network - (RD-L-15)-Z7-L015-LV | 2d | 2027-09-11 | 2027-09-13 | RHD4CZ7L015LV5200 | -131.02d |
| RHD4CZ7L015LV3200 |  | Cable Laying of Low Voltage Cables for Low Voltage Network - (RD-L-15)-Z7-L015-LV | 2d | 2027-09-13 | 2027-09-15 | RHD4CZ7L015LV3100 | -131.02d |

| ID | WBS | Task | Duration | Start | Finish | Predecessors | Total float |
| --- | --- | --- | --- | --- | --- | --- | --- |
| RHD4CZ7L015LV3300 |  | Warning tape and Backfill for Low Voltage Cables for Low Voltage Network - (RD-L-15)-Z7-L015-LV | 2d | 2027-09-15 | 2027-09-18 | RHD4CZ7L015LV3200 | -131.02d |
| RHD4CZ7L015LV3400 |  | Testing of Low Voltage Cables for Low Voltage Network - (RD-L-15)-Z7-L015-LV | 2d | 2027-11-24 | 2027-11-27 | RHD4CZ7L015LV3300, RHD4CZ7L015SW3500, RHD4CZ7L015IRR3202 | -188.02d |
|  | 6720 | **RHD4-02-002-Z7-L015-Street Lighting Network - SL** |  | 2027-02-25 | 2028-01-19 |  |  |
|  | 6721 | **RHD4-02-002-L015-(SL)-Street Lighting duct banks** |  | 2027-02-25 | 2027-03-15 |  |  |
| RHD4CZ7L015SL2100 |  | Excavation of Duct Banks for Street Lighting Network - (RD-L-15)-Z7-L015-SL | 3d | 2027-02-25 | 2027-03-01 | RHD4ENSDZ7APPSL170, RHD4CZ7L015MV2100 | -193.02d |
| RHD4CZ7L015SL2200 |  | Installation of Duct Banks for Street Lighting Network - (RD-L-15)-Z7-L015-SL | 4d | 2027-03-01 | 2027-03-06 | RHD4PRSHLDOSSL1000, RHD4PRSHLSTAGSL1000, RHD4CZ7L015SL2100 | -162.02d |
| RHD4CZ7L015SL2300 |  | Pouring of Duct Banks for Street Lighting Network - (RD-L-15)-Z7-L015-SL | 3d | 2027-03-06 | 2027-03-13 | RHD4CZ7L015SL2200 | -162.02d |
| RHD4CZ7L015SL2400 |  | Backfilling of Duct Banks for Street Lighting Network - (RD-L-15)-Z7-L015-SL | 2d | 2027-03-13 | 2027-03-15 | RHD4CZ7L015SL2300 | -162.02d |
|  | 6722 | **RHD4-02-002-L015-(SL)-Street Lighting Drawpit** |  | 2027-11-27 | 2027-12-01 |  |  |
| RHD4CZ7L015SL5100 |  | Excavation of Drawpit size 600x600x900mm for Street Lighting Network - (RD-L-15)-Z7-L015-SL | 2d | 2027-11-27 | 2027-11-29 | RHD4ENSDZ7APPSL170, RHD4CZ7L015SL2300, RHD4CZ7L015LV3400 | -188.02d |
| RHD4CZ7L015SL5200 |  | Installation of Drawpit size 600x600x900mm for Street Lighting Network - (RD-L-15)-Z7-L015-SL | 2d | 2027-11-29 | 2027-12-01 | RHD4PRSHLDOSSL1400, RHD4PRSHLSTAGSL1400, RHD4CZ7L015SL5100 | -188.02d |
|  | 6723 | **RHD4-02-002-L015-(SL)-Street Lighting cables** |  | 2027-12-01 | 2027-12-23 |  |  |
| RHD4CZ7L015SL3100 |  | Excavation for Street Lighting Cables for Street Lighting Network - (RD-L-15)-Z7-L015-SL | 6d | 2027-12-01 | 2027-12-08 | RHD4ENSDZ7APPSL170, RHD4CZ7L015SL5200 | -188.02d |
| RHD4CZ7L015SL3200 |  | Cable Laying of Street Lighting Cables for Street Lighting Network - (RD-L-15)-Z7-L015-SL | 5d | 2027-12-08 | 2027-12-14 | RHD4PRSHLDOSSL1100, RHD4ENMSSL2000, RHD4ENMSSL2010, RHD4PRSHLSTAGSL1100, RHD4CZ7L015SL3100 | -188.02d |
| RHD4CZ7L015SL3300 |  | Warning tape and Backfill for Street Lighting Cables for Street Lighting Network - (RD-L-15)-Z7-L015-SL | 5d | 2027-12-14 | 2027-12-20 | RHD4CZ7L015SL3200 | -188.02d |
| RHD4CZ7L015SL3400 |  | Testing of Street Lighting Cables for Street Lighting Network - (RD-L-15)-Z7-L015-SL | 3d | 2027-12-20 | 2027-12-23 | RHD4CZ7L015SL3300 | -188.02d |
|  | 6724 | **RHD4-02-002-L015-(SL)-Street Lighting Poles** |  | 2027-12-23 | 2028-01-19 |  |  |
| RHD4CZ7L015SL1100 |  | Excavation for RC Base for Lighting Poles for Street Lighting Network - (RD-L-15)-Z7-L015-SL | 4d | 2027-12-23 | 2027-12-28 | RHD4ENSDZ7APPSL170, RHD4CZ7L015SL2400, RHD4CZ7L015SL3400, RHD4CZ7L015PT4500 | -188.02d |
| RHD4CZ7L015SL1200 |  | Installation for RC Base for Lighting Poles for Street Lighting Network - (RD-L-15)-Z7-L015-SL | 4d | 2027-12-28 | 2028-01-02 | RHD4CZ7L015SL1100 | -188.02d |
| RHD4CZ7L015SL1300 |  | Backfill for RC Base for Lighting Poles for Street Lighting Network - (RD-L-15)-Z7-L015-SL | 4d | 2028-01-02 | 2028-01-06 | RHD4CZ7L015SL1200 | -188.02d |
| RHD4CZ7L015SL1400 |  | Installation for Lighting Poles for Street Lighting Network - (RD-L-15)-Z7-L015-SL | 5d | 2028-01-06 | 2028-01-12 | RHD4PRSHLDOSSL1200, RHD4ENMSSL2000, RHD4ENMSSL2010, RHD4PRSHLSTAGSL1200, RHD4CZ7L015SL1300, RHD4CZ7L015SL3400 | -188.02d |
| RHD4CZ7L015SL1500 |  | Luminaire Installation for Lighting Poles for Street Lighting Network - (RD-L-15)-Z7-L015-SL | 4d | 2028-01-15 | 2028-01-19 | RHD4PRSHLDOSSL1300, RHD4PRSHLSTAGSL1300, RHD4CZ7L015SL1400, RHD4CZ7L015SL6100 | -188.02d |
|  | 6726 | **RHD4-02-002-L015-(SL)-Street Lighting Earthing System** |  | 2028-01-12 | 2028-01-15 |  |  |
| RHD4CZ7L015SL6100 |  | Installation of Earthing for Lighting Poles and Fedder Pillers for Street Lighting Network - (RD-L-15)-Z7-L015-SL | 2d | 2028-01-12 | 2028-01-15 | RHD4ENMSER2000, RHD4ENMSER2010, RHD4CZ7L015SL1400 | -188.02d |
|  | 6732 | **RHD4-02-002-Z7-L015-Telecommunications Network - TC** |  | 2027-03-01 | 2028-03-05 |  |  |
|  | 6733 | **RHD4-02-002-L015-(TC)-Telecommunications Ducts** |  | 2028-01-19 | 2028-03-05 |  |  |
| RHD4CZ7L015TC2100 |  | Excavation of HDPE Ducts for Telecom Network - (RD-L-15)-Z7-L015-TC | 10d | 2028-01-19 | 2028-01-31 | RHD4ENSDZ7APPTC190, RHD4CZ7L015TC3400, RHD4CZ7L015SL1500 | -177.02d |
| RHD4CZ7L015TC2200 |  | Installation of HDPE Ducts for Telecom Network - (RD-L-15)-Z7-L015-TC | 15d | 2028-01-31 | 2028-02-17 | RHD4PRSHLDOSTC1000, RHD4PRSHLSTAGTC1000, RHD4CZ7L015TC2100 | -177.02d |
| RHD4CZ7L015TC2400 |  | Backfilling of HDPE Ducts for Telecom Network - (RD-L-15)-Z7-L015-TC | 10d | 2028-02-17 | 2028-03-05 | RHD4CZ7L015TC2200, RHD4CZ7L015TC5200 | -177.02d |
|  | 6734 | **RHD4-02-002-L015-(TC)-Telecommunications Manholes** |  | 2028-01-31 | 2028-02-12 |  |  |
| RHD4CZ7L015TC5100 |  | Excavation for Manholes for Telecom Network - (RD-L-15)-Z7-L015-TC | 5d | 2028-01-31 | 2028-02-06 | RHD4ENSDZ7APPTC190, RHD4CZ7L015TC2100 | -172.02d |
| RHD4CZ7L015TC5200 |  | Installation of Manholes for Telecom Network - (RD-L-15)-Z7-L015-TC | 5d | 2028-02-06 | 2028-02-12 | RHD4PRSHLDOSTC1200, RHD4PRSHLSTAGTC1200, RHD4CZ7L015TC5100, RHD4CZ7L015TC2200 SS | -172.02d |
|  | 6735 | **RHD4-02-002-L015-(TC)-Telecomminications Road Crossings** |  | 2027-03-01 | 2027-03-14 |  |  |
| RHD4CZ7L015TC3100 |  | Excavation for Road Crossings for Telecom Network - (RD-L-15)-Z7-L015-TC | 2d | 2027-03-01 | 2027-03-03 | RHD4ENSDZ7APPTC190, RHD4CZ7L015SL2100 | -193.02d |
| RHD4CZ7L015TC3200 |  | Installation of Road Crossings for Telecom Network - (RD-L-15)-Z7-L015-TC | 2d | 2027-03-03 | 2027-03-06 | RHD4PRSHLDOSTC1100, RHD4PRSHLSTAGTC1100, RHD4CZ7L015TC3100 | -163.02d |
| RHD4CZ7L015TC3300 |  | Pouring of Road Crossings for Telecom Network - (RD-L-15)-Z7-L015-TC | 2d | 2027-03-06 | 2027-03-08 | RHD4CZ7L015TC3200 | -163.02d |
| RHD4CZ7L015TC3400 |  | Backfilling of Road Crossings for Telecom Network - (RD-L-15)-Z7-L015-TC | 2d | 2027-03-08 | 2027-03-14 | RHD4CZ7L015TC3300 | -163.02d |
|  | 6736 | **RHD4-02-002-Z7-L015-Information and Communication Technologies - ICT** |  | 2027-03-03 | 2028-04-10 |  |  |
|  | 6737 | **RHD4-02-002-L015-(ICT)-Information and Communication Technologies Ducts** |  | 2028-03-05 | 2028-04-10 |  |  |
| RHD4CZ7L015ICT2100 |  | Excavation of HDPE Ducts for ICT Network - (RD-L-15)-Z7-L015-ICT | 9d | 2028-03-05 | 2028-03-15 | RHD4ENSDZ7APPICT200, RHD4CZ7L015ICT3400, RHD4CZ7L015TC2400 | -177.02d |
| RHD4CZ7L015ICT2200 |  | Installation of HDPE Ducts for ICT Network - (RD-L-15)-Z7-L015-ICT | 13d | 2028-03-15 | 2028-03-30 | RHD4PRSHLDOSICT1000, RHD4PRSHLSTAGICT1000, RHD4CZ7L015ICT2100 | -177.02d |
| RHD4CZ7L015ICT2400 |  | Backfilling of HDPE Ducts for ICT Network - (RD-L-15)-Z7-L015-ICT | 9d | 2028-03-30 | 2028-04-10 | RHD4CZ7L015ICT2200, RHD4CZ7L015ICT5200 | -177.02d |
|  | 6738 | **RHD4-02-002-L015-(ICT)-Information and Communication Technologies Manholes** |  | 2028-03-15 | 2028-03-22 |  |  |
| RHD4CZ7L015ICT5100 |  | Excavation for Manholes for ICT Network - (RD-L-15)-Z7-L015-ICT | 3d | 2028-03-15 | 2028-03-19 | RHD4ENSDZ7APPICT200, RHD4CZ7L015ICT2100 | -170.02d |
| RHD4CZ7L015ICT5200 |  | Installation of Manholes for ICT Network - (RD-L-15)-Z7-L015-ICT | 3d | 2028-03-19 | 2028-03-22 | RHD4PRSHLDOSICT1200, RHD4PRSHLSTAGICT1200, RHD4CZ7L015ICT5100 | -170.02d |
|  | 6739 | **RHD4-02-002-L015-(ICT)-Information and Communication Technologies Road Crossings** |  | 2027-03-03 | 2027-03-16 |  |  |
| RHD4CZ7L015ICT3100 |  | Excavation for Road Crossings for ICT Network - (RD-L-15)-Z7-L015-ICT | 2d | 2027-03-03 | 2027-03-06 | RHD4ENSDZ7APPICT200, RHD4CZ7L015TC3100 | -193.02d |
| RHD4CZ7L015ICT3200 |  | Installation of Road Crossings for ICT Network - (RD-L-15)-Z7-L015-ICT | 2d | 2027-03-06 | 2027-03-08 | RHD4PRSHLDOSICT1100, RHD4PRSHLSTAGICT1100, RHD4CZ7L015ICT3100 | -193.02d |
| RHD4CZ7L015ICT3300 |  | Pouring of Road Crossings for ICT Network - (RD-L-15)-Z7-L015-ICT | 2d | 2027-03-08 | 2027-03-14 | RHD4CZ7L015ICT3200 | -193.02d |
| RHD4CZ7L015ICT3400 |  | Backfilling of Road Crossings for ICT Network - (RD-L-15)-Z7-L015-ICT | 2d | 2027-03-14 | 2027-03-16 | RHD4CZ7L015ICT3300 | -193.02d |
|  | 6727 | **RHD4-02-002-Z7-L015-Landscape Network - LS** |  |  |  |  |  |
|  | 6728 | **RHD4-02-002-L015-(LS)-Landscape Lighting cables** |  |  |  |  |  |
|  | 6729 | **RHD4-02-002-L015-(LS)-Landscape Feeder Pillars** |  |  |  |  |  |
|  | 6730 | **RHD4-02-002-L015-(LS)-Landscape Bollard Poles** |  |  |  |  |  |
|  | 6731 | **RHD4-02-002-L015-(LS)-Landscape Feeder Pillars Earthing** |  |  |  |  |  |
|  | 6740 | **RHD4-02-002-Z7-L015-Security Network - CCTV** |  | 2028-04-10 | 2028-05-23 |  |  |
|  | 499 | **RHD4-02-002-Z7-L015-(CCTV)-CCTV Poles** |  | 2028-04-16 | 2028-04-27 |  |  |
| RHD4CZ7L015CCTV1100 |  | Excavation for RC Base for CCTV Poles for Security Network - (RD-L-15)-Z7-L015-CCTV | 2d | 2028-04-16 | 2028-04-18 | RHD4CZ7L015CCTV2100 | -162.06d |
| RHD4CZ7L015CCTV1200 |  | Installation for RC Base for CCTV Poles for Security Network - (RD-L-15)-Z7-L015-CCTV | 2d | 2028-04-18 | 2028-04-20 | RHD4CZ7L015CCTV1100 | -162.06d |
| RHD4CZ7L015CCTV1300 |  | Backfill for RC Base for CCTV Poles for Security Network - (RD-L-15)-Z7-L015-CCTV | 2.03d | 2028-04-20 | 2028-04-23 | RHD4CZ7L015CCTV1200 | -162.06d |
| RHD4CZ7L015CCTV1400 |  | Installation for CCTV Poles for Security Network - (RD-L-15)-Z7-L015-CCTV | 2d | 2028-04-23 | 2028-04-25 | RHD4CZ7L015CCTV1300 | -162.06d |
| RHD4CZ7L015CCTV1500 |  | Protection post Installation for CCTV Poles for Security Network - (RD-L-15)-Z7-L015-CCTV | 2d | 2028-04-25 | 2028-04-27 | RHD4CZ7L015CCTV1400 | -158.06d |
|  | 501 | **RHD4-02-002-Z7-L015-(CCTV)-Power and Infrastructure** |  | 2028-04-25 | 2028-04-30 |  |  |
| RHD4CZ7L015CCTV4100 |  | Installation of Power outlet, UPS and midspan for PTZ Camerafor Cameras for Security Network - (RD-L-15)-Z7-L015-CCTV | 2.01d | 2028-04-25 | 2028-04-27 | RHD4CZ7L015CCTV1400 | -162.06d |
| RHD4CZ7L015CCTV4200 |  | Short Range Wireless PoP wireless Bridgefor CCTV Poles for Security Network - (RD-L-15)-Z7-L015-CCTV | 2d | 2028-04-27 | 2028-04-30 | RHD4CZ7L015CCTV4100 | -162.06d |
|  | 6741 | **RHD4-02-002-Z7-L015-(CCTV)-Civil Works** |  | 2028-04-10 | 2028-04-16 |  |  |
| RHD4CZ7L015CCTV2100 |  | Civil Works for Security Network - (RD-L-15)-Z7-L015-CCTV | 5d | 2028-04-10 | 2028-04-16 | RHD4CZ7L015ICT2400, RHD4CZ7L015TC2400, RHD4CZ7L015ICT2400 FF | -177.02d |
|  | 500 | **RHD4-02-002-Z7-L015-(CCTV)-Camera** |  | 2028-04-30 | 2028-05-02 |  |  |
| RHD4CZ7L015CCTV3100 |  | Installation for Cameras for Security Network - (RD-L-15)-Z7-L015-CCTV | 2d | 2028-04-30 | 2028-05-02 | RHD4CZ7L015CCTV1400, RHD4CZ7L015CCTV4100, RHD4CZ7L015CCTV4200 | -162.06d |
|  | 503 | **RHD4-02-002-Z7-L015-(CCTV)-CCTV Panels and Components** |  | 2028-05-02 | 2028-05-23 |  |  |

| ID | WBS | Task | Duration | Start | Finish | Predecessors | Complete | Total float |
| --- | --- | --- | --- | --- | --- | --- | --- | --- |
| RHD4CZ7L015CCTV6100 |  | Installation for CCTV Panels for Security Network - (RD-L-15)-Z7-L015-CCTV | 15d | 2028-05-02 | 2028-05-23 | RHD4CZ7L015CCTV4200, RHD4CZ7L015CCTV3100, RHD4CZ7L015CCTV1500 |  | -162.06d |
|  | 6946 | **RHD4-02-002-Z7-A012** |  | 2026-07-18 | 2028-06-04 |  |  |  |
|  | 7021 | **RHD4-02-002-Z7-A012-Crossings Potable Network - PTCr** |  |  |  |  |  |  |
|  | 7025 | **RHD4-02-002-A012-(PTCr)-HDPE Pipes - 400 mm diameter** |  |  |  |  |  |  |
|  | 7028 | **RHD4-02-002-A012-(PTCr)-Butterfly Valve Chamber** |  |  |  |  |  |  |
|  | 7029 | **RHD4-02-002-A012-(PTCr)-Butterfly Valves** |  |  |  |  |  |  |
|  | 7034 | **RHD4-02-002-A012-(PTCr)-Fire Hydrant** |  |  |  |  |  |  |
|  | 7068 | **RHD4-02-002-Z7-A012-Crossings Irrigation Network - IRRC** |  |  |  |  |  |  |
|  | 7072 | **RHD4-02-002-A012-(IRRC)-HDPE Pipes - 250 mm diameter** |  |  |  |  |  |  |
|  | 7076 | **RHD4-02-002-A012-(IRRC)-HDPE Pipes - 500 mm diameter** |  |  |  |  |  |  |
|  | 7077 | **RHD4-02-002-A012-(IRRC)-Gate Valves (Direct Buried)** |  |  |  |  |  |  |
|  | 7078 | **RHD4-02-002-A012-(IRRC)-Butterfly Valve Chamber** |  |  |  |  |  |  |
|  | 7079 | **RHD4-02-002-A012-(IRRC)-Butterfly Valves** |  |  |  |  |  |  |
|  | 7080 | **RHD4-02-002-A012-(IRRC)-Wash out Chamber** |  |  |  |  |  |  |
|  | 7081 | **RHD4-02-002-A012-(IRRC)-Wash out Valves** |  |  |  |  |  |  |
|  | 7125 | **RHD4-02-002-Z7-A012-Road Works - RD** |  | 2026-07-18 | 2028-06-04 |  |  |  |
|  | 7126 | **RHD4-02-002-A012-(RD)-Subgrade** |  | 2026-07-18 | 2026-07-22 |  |  |  |
| RHD4CZ7A012RD1100 |  | Supply, lay and compaction subgrade compacted thickness 300 mm for Roads - (RD-A-1 /2)-Z7-A012-RD | 4d | 2026-07-18 A | 2026-07-22 A | RHD4ENSDZ7APPEW100, RHD4ENSDZ7APPRD220, RHD4CZ7A012RW3000, RHD4CZ7A012ST1506, RHD4CZ7A012ICT3400, RHD4CZ7A012TC3400, RHD4CZ7A012ST3501 | 100% |  |
|  | 7127 | **RHD4-02-002-A012-(RD)-Aggregate Base Course** |  | 2026-10-17 | 2026-10-27 |  |  |  |
| RHD4CZ7A012RD2100 |  | Supply, lay and compaction Aggregate base course compacted thickness 300 mmfor Roads - (RD-A-1 /2)-Z7-A012-RD | 7d | 2026-10-17 A | 2026-10-27 A | RHD4PRSHLDOSRD1000, RHD4PRSHLSTAGRD1000, RHD4CZ7A012RD1100 | 100% |  |
|  | 7128 | **RHD4-02-002-A012-(RD)-Bituminous base course Two Layers, including (MC1)&(RC2)** |  | 2027-02-18 | 2027-09-16 |  |  |  |
| RHD4CZ7A012RD3100 |  | Supply, lay and Asphaltic base course including Prime Coat (MC1) for 1st Layer - (RD-A-1 /2)-Z7-A012-RD | 4d | 2027-02-18 | 2027-02-24 | RHD4PRSHLDOSRD1100, RHD4ENMSASPH2000, RHD4ENMSASPH2010, RHD4PRSHLSTAGRD1100, RHD4CZ7A012RD2100 |  | -176.02d |
| RHD4CZ7A012RD3200 |  | Supply, lay and Asphaltic base course including Tack Coat (RC2) for 2nd Layer - (RD-A-1 /2)-Z7-A012-RD | 4d | 2027-09-13 | 2027-09-16 | RHD4PRSHLDOSRD1100, RHD4PRSHLSTAGRD1100, RHD4CZ7A012ICT5200 |  | -83d |
|  | 7130 | **RHD4-02-002-A012-(RD)-Precast Concrete Curb** |  | 2027-09-18 | 2027-09-28 |  |  |  |
| RHD4CZ7A012RD5100 |  | Supply and installation Precast Concrete Kerb for Roads - (RD-A-1 /2)-Z7-A012-RD | 9d | 2027-09-18 | 2027-09-28 | RHD4PRSHLDOSRD1200, RHD4ENMSRD2000, RHD4ENMSRD2010, RHD4PRSHLSTAGRD1200, RHD4CZ7A012RD3200 |  | -83d |
|  | 7133 | **RHD4-02-002-A012-(RD)-Traffic Signage** |  | 2028-05-08 | 2028-05-15 |  |  |  |
| RHD4CZ7A012RD8100 |  | Installation of Traffic Signage for Road Network - (RD-A-1 /2)-Z7-A012-RD | 6d | 2028-05-08 | 2028-05-15 | RHD4PRSHLDOSRD1600, RHD4PRSHLSTAGRD1600, RHD4CZ7A012RD5100, RHD4CZ7L015RD8100, RHD4CZ5A014RD8100 |  | -152.02d |
|  | 7131 | **RHD4-02-002-A012-(RD)-Precast Interlocking Block Pavers** |  |  |  |  |  |  |
|  | 7129 | **RHD4-02-002-A012-(RD)-Bituminous concrete wearing course including tack coat (RC2)** |  | 2028-05-25 | 2028-05-28 |  |  |  |
| RHD4CZ7A012RD4100 |  | Supply, lay and compaction Asphaltic wearing course including tack Coat (RC2)for Road Network - (RD-A-1 /2)-Z7-A012-RD | 2d | 2028-05-25 | 2028-05-28 | RHD4CZ7A012RD5100, RHD4CZ7L015RD4100 |  | -162.06d |
|  | 7132 | **RHD4-02-002-A012-(RD)-Pavement Marking** |  | 2028-05-28 | 2028-06-04 |  |  |  |
| RHD4CZ7A012RD7100 |  | Pavement Markings for Road Network - (RD-A-1 /2)-Z7-A012-RD | 6d | 2028-05-28 | 2028-06-04 | RHD4PRSHLDOSRD1500, RHD4PRSHLSTAGRD1500, RHD4CZ7A012RD4100, RHD4CZ7L015RD7100 FF |  | -162.06d |
|  | 6950 | **RHD4-02-002-Z7-A012-Storm Network - ST** |  | 2026-08-04 | 2027-04-27 |  |  |  |
|  | 6967 | **RHD4-02-002-A012-(ST)-MH Works - 1200 mm diameter** |  |  |  |  |  |  |
|  | 2039 | **RHD4-02-002-A012-(ST)-GRP Pipes - 1000 mm diameter** |  | 2026-08-05 | 2027-02-11 |  |  |  |
| RHD4CZ7A012ST1106 |  | Excavation works for GRP Pipe Line 1000 mm - (RD-A-1 /2)-Z7-A012-ST | 2d | 2026-08-05 A | 2026-08-08 A | RHD4CZ7L015ST1105 | 100% |  |
| RHD4CZ7A012ST1206 |  | Bedding works for GRP Pipe Line 1000 mm - (RD-A-1 /2)-Z7-A012-ST | 2d | 2026-08-09 A | 2026-08-11 A | RHD4CZ7A012ST1106 | 100% |  |
| RHD4CZ7A012ST1306 |  | Installing for GRP Pipe Line 1000 mm - (RD-A-1 /2)-Z7-A012-ST | 2d | 2026-08-12 A | 2026-08-13 A | RHD4CZ7A012ST1206 | 100% |  |
| RHD4CZ7A012ST1506 |  | Backfilling and warning tape works for GRP Pipe Line 1000 mm - (RD-A-1 /2)-Z7-A012-ST | 2d | 2026-08-15 A | 2026-08-17 A | RHD4CZ7A012ST1406, RHD4CZ7A012ST3501 | 100% |  |
| RHD4CZ7A012ST1406 |  | Primary Test for GRP Pipe Line 1000 mm - (RD-A-1 /2)-Z7-A012-ST | 2d | 2027-02-09 | 2027-02-11 | RHD4CZ7A012ST1306 |  | -170.02d |
|  | 5254 | **RHD4-02-002-A012-(ST)-GRP Pipes - 900 mm diameter** |  | 2026-09-05 | 2027-04-22 |  |  |  |
| RHD4CZ7A012ST1105 |  | Excavation works for GRP Pipe Line 900 mm - (RD-A-1 /2)-Z7-A012-ST | 2d | 2026-09-05 A | 2026-09-06 A | RHD4CZ7A012ST1106, RHD4CZ7L015ST1104 | 100% |  |
| RHD4CZ7A012ST1205 |  | Bedding works for GRP Pipe Line 900 mm - (RD-A-1 /2)-Z7-A012-ST | 2d | 2026-09-06 A | 2026-09-07 A | RHD4CZ7A012ST1105 | 100% |  |
| RHD4CZ7A012ST1305 |  | Installing for GRP Pipe Line 900 mm - (RD-A-1 /2)-Z7-A012-ST | 2d | 2026-09-07 A | 2026-09-08 A | RHD4CZ7A012ST1205 | 100% |  |
| RHD4CZ7A012ST1505 |  | Backfilling and warning tape works for GRP Pipe Line 900 mm - (RD-A-1 /2)-Z7-A012-ST | 2d | 2026-09-08 A | 2026-09-09 A | RHD4CZ7A012ST1405, RHD4CZ7A012ST3501 | 100% |  |
| RHD4CZ7A012ST1405 |  | Primary Test for GRP Pipe Line 900 mm - (RD-A-1 /2)-Z7-A012-ST | 2d | 2027-04-21 | 2027-04-22 | RHD4CZ7A012ST1305 |  | -65d |
|  | 6576 | **RHD4-02-002-L015-(ST)-GRP Pipes - 700 mm diameter** |  | 2026-09-05 | 2027-04-22 |  |  |  |
| RHD4CZ7A012ST1103 |  | Excavation works for GRP Pipe Line 700 mm - (RD-A-1 /2)-Z7-A012-ST | 2d | 2026-09-05 A | 2026-09-06 A | RHD4CZ7A012ST3201, RHD4CZ7A012ST1104 | 100% |  |
| RHD4CZ7A012ST1203 |  | Bedding works for GRP Pipe Line 700 mm - (RD-A-1 /2)-Z7-A012-ST | 2d | 2026-09-06 A | 2026-09-07 A | RHD4CZ7A012ST1103 | 100% |  |
| RHD4CZ7A012ST1303 |  | Installing for GRP Pipe Line 700 mm - (RD-A-1 /2)-Z7-A012-ST | 2d | 2026-09-07 A | 2026-09-08 A | RHD4CZ7A012ST1203, RHD4CZ7A012ST3301 | 100% |  |
| RHD4CZ7A012ST1503 |  | Backfilling and warning tape works for GRP Pipe Line 700 mm - (RD-A-1 /2)-Z7-A012-ST | 2d | 2026-09-08 A | 2026-09-09 A | RHD4CZ7A012ST1403, RHD4CZ7A012ST1504 | 100% |  |
| RHD4CZ7A012ST1403 |  | Primary Test for GRP Pipe Line 700 mm - (RD-A-1 /2)-Z7-A012-ST | 2d | 2027-04-21 | 2027-04-22 | RHD4CZ7A012ST1303 |  | -65d |
|  | 6590 | **RHD4-02-002-L015-(ST)-MH Works - 1500 mm diameter** |  | 2026-10-24 | 2027-02-18 |  |  |  |
| RHD4CZ7A012ST3101 |  | Excavation and PC Blinding works for MH 1500 mm - (RD-A-1 /2)-Z7-A012-ST | 2d | 2026-10-24 A | 2026-10-25 A | RHD4CZ7A012ST1106 SS | 100% |  |
| RHD4CZ7A012ST3201 |  | Installation of Base for MH 1500 mm - (RD-A-1 /2)-Z7-A012-ST | 2d | 2026-10-26 A | 2027-02-11 | RHD4CZ7A012ST3101 | 69% | -176.02d |
| RHD4CZ7A012ST3301 |  | MH Ring and C.Slab works and Backfilling works for MH 1500 mm - (RD-A-1 /2)-Z7-A012-ST | 2d | 2027-02-11 | 2027-02-14 | RHD4CZ7A012ST3201 |  | -176.02d |
| RHD4CZ7A012ST3401 |  | Steel Cover for MH 1500 mm - (RD-A-1 /2)-Z7-A012-ST | 2d | 2027-02-14 | 2027-02-16 | RHD4CZ7A012ST3301 |  | -176.02d |
| RHD4CZ7A012ST3501 |  | Finishing, Benching, Testing works for MH 1500 mm - (RD-A-1 /2)-Z7-A012-ST | 2d | 2027-02-16 | 2027-02-18 | RHD4CZ7A012ST3401 |  | -176.02d |
|  | 6024 | **RHD4-02-002-A012-(ST)-MH Works - 2000 mm diameter** |  | 2026-08-04 | 2027-04-27 |  |  |  |
| RHD4CZ7A012ST3102 |  | Excavation and PC Blinding works for MH 2000 mm - (RD-A-1 /2)-Z7-A012-ST | 2d | 2026-08-04 A | 2026-08-06 A | RHD4CZ7A012ST3101, RHD4CZ7A012ST1105 | 100% |  |
| RHD4CZ7A012ST3202 |  | Installation of Base for MH 2000 mm - (RD-A-1 /2)-Z7-A012-ST | 2d | 2026-09-19 A | 2026-10-24 A | RHD4CZ7A012ST3102 | 100% |  |
| RHD4CZ7A012ST3302 |  | MH Ring and C.Slab works and Backfilling works for MH 2000 mm - (RD-A-1 /2)-Z7-A012-ST | 2d | 2026-09-21 A | 2027-04-22 | RHD4CZ7A012ST3202 | 75% | -69d |
| RHD4CZ7A012ST3402 |  | Steel Cover for MH 2000 mm - (RD-A-1 /2)-Z7-A012-ST | 2d | 2027-04-24 | 2027-04-25 | RHD4CZ7A012ST3302 |  | -69d |
| RHD4CZ7A012ST3502 |  | Finishing, Benching, Testing works for MH 2000 mm - (RD-A-1 /2)-Z7-A012-ST | 2d | 2027-04-26 | 2027-04-27 | RHD4CZ7A012ST3402, RHD4CZ7A012ST3501 |  | -69d |
|  | 6010 | **RHD4-02-002-A012-(ST)-GRP Pipes - 800 mm diameter** |  | 2026-09-05 | 2027-04-22 |  |  |  |
| RHD4CZ7A012ST1104 |  | Excavation works for GRP Pipe Line 800 mm - (RD-A-1 /2)-Z7-A012-ST | 2d | 2026-09-05 A | 2026-09-06 A | RHD4CZ7A012ST1105 | 100% |  |
| RHD4CZ7A012ST1204 |  | Bedding works for GRP Pipe Line 800 mm - (RD-A-1 /2)-Z7-A012-ST | 2d | 2026-09-06 A | 2026-09-07 A | RHD4CZ7A012ST1104 | 100% |  |
| RHD4CZ7A012ST1304 |  | Installing for GRP Pipe Line 800 mm - (RD-A-1 /2)-Z7-A012-ST | 2d | 2026-09-07 A | 2026-09-08 A | RHD4CZ7A012ST1204 | 100% |  |
| RHD4CZ7A012ST1504 |  | Backfilling and warning tape works for GRP Pipe Line 800 mm - (RD-A-1 /2)-Z7-A012-ST | 2d | 2026-09-08 A | 2026-09-09 A | RHD4CZ7A012ST1404, RHD4CZ7A012ST1505, RHD4CZ7A012ST1506, RHD4CZ7A012ST3502 | 100% |  |
| RHD4CZ7A012ST1404 |  | Primary Test for GRP Pipe Line 800 mm - (RD-A-1 /2)-Z7-A012-ST | 2d | 2027-04-21 | 2027-04-22 | RHD4CZ7A012ST1304 |  | -65d |

| ID | WBS | Task | Duration | Start | Finish | Predecessors | Complete | Total float |
| --- | --- | --- | --- | --- | --- | --- | --- | --- |
|  | 6953 | **RHD4-02-002-A012-(ST)-GRP Pipes - 600 mm diameter** |  |  |  |  |  |  |
|  | 6951 | **RHD4-02-002-A012-(ST)-GRP Pipes - 400 mm diameter** |  |  |  |  |  |  |
|  | 6966 | **RHD4-02-002-A012-(ST)-UPVC Pipes - 400 mm diameter** |  |  |  |  |  |  |
|  | 6965 | **RHD4-02-002-A012-(ST)-UPVC Pipes - 300 mm diameter** |  | 2026-08-23 | 2027-04-22 |  |  |  |
| RHD4CZ7A012ST2100 |  | Excavation works for UPVC Pipe Line 300 mm - (RD-A-1 /2)-Z7-A012-ST | 2d | 2026-08-23 A | 2026-08-24 A | RHD4ENSDZ7APPST110, RHD4CZ7A012ST1103 | 100% |  |
| RHD4CZ7A012ST2200 |  | Bedding works for UPVC Pipe Line 300 mm - (RD-A-1 /2)-Z7-A012-ST | 2d | 2026-08-25 A | 2026-08-26 A | RHD4CZ7A012ST2100 | 100% |  |
| RHD4CZ7A012ST2300 |  | Installing for UPVC Pipe Line 300 mm - (RD-A-1 /2)-Z7-A012-ST | 2d | 2026-08-27 A | 2026-08-29 A | RHD4PRSHLDOSST1106, RHD4PRSHLSTAGST1106, RHD4CZ7A012ST2200 | 100% |  |
| RHD4CZ7A012ST2500 |  | Backfilling and warning tape works for UPVC Pipe Line 300 mm - (RD-A-1 /2)-Z7-A012-ST | 2d | 2026-09-05 A | 2026-09-06 A | RHD4CZ7A012ST2400, RHD4CZ7A012ST6100 | 100% |  |
| RHD4CZ7A012ST2400 |  | Primary Test for UPVC Pipe Line 300 mm - (RD-A-1 /2)-Z7-A012-ST | 2d | 2027-04-21 | 2027-04-22 | RHD4CZ7A012ST2300 |  | -88d |
|  | 6973 | **RHD4-02-002-A012-(ST)-Concrete Encasement** |  | 2026-09-07 | 2026-09-08 |  |  |  |
| RHD4CZ7A012ST6100 |  | Pipe Encasement for Storm Pipelines - (RD-A-1 /2)-Z7-A012-ST | 2d | 2026-09-07 A | 2026-09-08 A | RHD4CZ7A012ST2300 SS, RHD4CZ7A012ST2300 FF, RHD4CZ7A012ST2200 | 100% |  |
|  | 6974 | **RHD4-02-002-Z7-A012-Catch Basin - ST** |  | 2026-08-18 | 2027-04-27 |  |  |  |
|  | 6975 | **RHD4-02-002-A012-(ST)-Single Catch Basin Works** |  | 2026-08-18 | 2027-04-26 |  |  |  |
| RHD4CZ7A012ST7100 |  | Excavation works for Single Catch Basin - (RD-A-1 /2)-Z7-A012-ST | 2d | 2026-08-18 A | 2026-08-19 A | RHD4ENSDZ7APPST110, RHD4CZ7A012ST3102 | 100% |  |
| RHD4CZ7A012ST7200 |  | PC Blinding, Installation and Pipe connection for Single Catch Basin - (RD-A-1 /2)-Z7-A012-ST | 2d | 2026-09-05 A | 2026-09-06 A | RHD4CZ7A012ST7100 | 100% |  |
| RHD4CZ7A012ST7300 |  | Rings & C.Slab & Final Backfill for Single Catch Basin - (RD-A-1 /2)-Z7-A012-ST | 2d | 2026-09-07 A | 2026-09-19 A | RHD4PRSHLDOSST1306, RHD4PRSHLSTAGST1306, RHD4CZ7A012ST7200 | 100% |  |
| RHD4CZ7A012ST7400 |  | Steel Cover for Single Catch Basin - (RD-A-1 /2)-Z7-A012-ST | 2d | 2027-04-21 | 2027-04-22 | RHD4PRSHLDOSST1706, RHD4CZ7A012ST7300 |  | -98d |
| RHD4CZ7A012ST7500 |  | Finishing and Insulation works for Single Catch Basin - (RD-A-1 /2)-Z7-A012-ST | 3d | 2027-04-24 | 2027-04-26 | RHD4CZ7A012ST7400 |  | -98d |
|  | 6976 | **RHD4-02-002-A012-(ST)-Double Catch Basin Works** |  | 2026-08-22 | 2027-04-27 |  |  |  |
| RHD4CZ7A012ST8100 |  | Excavation works for Double Catch Basin - (RD-A-1 /2)-Z7-A012-ST | 2d | 2026-08-22 A | 2026-08-23 A | RHD4ENSDZ7APPST110, RHD4CZ7A012ST7100 | 100% |  |
| RHD4CZ7A012ST8200 |  | PC Blinding, Installation and Pipe connection for Double Catch Basin - (RD-A-1 /2)-Z7-A012-ST | 2d | 2026-09-05 A | 2026-09-06 A | RHD4CZ7A012ST8100 | 100% |  |
| RHD4CZ7A012ST8300 |  | Rings & C.Slab & Final Backfillfor Double Catch Basin - (RD-A-1 /2)-Z7-A012-ST | 2d | 2026-09-07 A | 2026-09-19 A | RHD4PRSHLDOSST1306, RHD4PRSHLSTAGST1306, RHD4CZ7A012ST8200 | 100% |  |
| RHD4CZ7A012ST8400 |  | Steel Cover for Double Catch Basin - (RD-A-1 /2)-Z7-A012-ST | 2d | 2027-04-24 | 2027-04-25 | RHD4PRSHLDOSST1706, RHD4CZ7A012ST8300, RHD4CZ7A012ST7400 |  | -96d |
| RHD4CZ7A012ST8500 |  | Finishing and Insulation works for Double Catch Basin - (RD-A-1 /2)-Z7-A012-ST | 2d | 2027-04-26 | 2027-04-27 | RHD4CZ7A012ST8400 |  | -96d |
|  | 6810 | **RHD4-02-002-Z7-A012-Sewage Network - SW** |  | 2026-08-04 | 2027-06-01 |  |  |  |
|  | 6433 | **RHD4-02-002-A012-(SW)-GRP Pipes - 300 mm diameter** |  | 2026-08-11 | 2027-05-02 |  |  |  |
| RHD4CZ7A012SW1100 |  | Excavation works for GRP Pipe Line 300 mm - (RD-A-1 /2)-Z7-A012-SW | 2d | 2026-08-11 A | 2026-10-26 A | RHD4CZ7A012ST2500 | 100% |  |
| RHD4CZ7A012SW1200 |  | Bedding works for GRP Pipe Line 300 mm - (RD-A-1 /2)-Z7-A012-SW | 2d | 2026-10-27 A | 2027-04-25 | RHD4CZ7A012SW1100 | 31% | -87d |
| RHD4CZ7A012SW1300 |  | Installing for GRP Pipe Line 300 mm - (RD-A-1 /2)-Z7-A012-SW | 2d | 2026-10-29 A | 2027-04-27 | RHD4CZ7A012SW1200 | 30% | -87d |
| RHD4CZ7A012SW1400 |  | Primary Test for GRP Pipe Line 300 mm - (RD-A-1 /2)-Z7-A012-SW | 2d | 2027-04-28 | 2027-04-29 | RHD4CZ7A012SW1300 |  | -87d |
| RHD4CZ7A012SW1500 |  | Backfilling and warning tape works for GRP Pipe Line 300 mm - (RD-A-1 /2)-Z7-A012-SW | 2d | 2027-05-01 | 2027-05-02 | RHD4CZ7A012SW1400 |  | -87d |
|  | 6442 | **RHD4-02-002-A012-(SW)-MH Works - 1200 mm diameter** |  | 2026-08-04 | 2027-06-01 |  |  |  |
| RHD4CZ7A012SW3100 |  | Excavation and PC Blinding works for MH 1200 mm - (RD-A-1 /2)-Z7-A012-SW | 6d | 2026-08-04 A | 2027-04-29 | RHD4CZ7A012SW1100 | 86% | -88d |
| RHD4CZ7A012SW3200 |  | Installation of Base for MH 1200 mm - (RD-A-1 /2)-Z7-A012-SW | 7d | 2026-09-20 A | 2027-05-08 | RHD4CZ7A012SW3100 | 29% | -88d |
| RHD4CZ7A012SW3300 |  | MH Ring and C.Slab works and Backfilling works for MH 1200 mm - (RD-A-1 /2)-Z7-A012-SW | 7d | 2027-05-09 | 2027-05-20 | RHD4CZ7A012SW3200 |  | -88d |
| RHD4CZ7A012SW3400 |  | Steel Cover for MH 1200 mm - (RD-A-1 /2)-Z7-A012-SW | 3d | 2027-05-22 | 2027-05-24 | RHD4CZ7A012SW3300 |  | -88d |
| RHD4CZ7A012SW3500 |  | Finishing, Benching, Testing works for MH 1200 mm - (RD-A-1 /2)-Z7-A012-SW | 7d | 2027-05-25 | 2027-06-01 | RHD4CZ7A012SW3400, RHD4CZ7A012ST1503 |  | -88d |
|  | 6434 | **RHD4-02-002-A012-(SW)-GRP Pipes - 400 mm diameter** |  | 2026-09-15 | 2027-05-27 |  |  |  |
| RHD4CZ7A012SW1101 |  | Excavation works for GRP Pipe Line 400 mm - (RD-A-1 /2)-Z7-A012-SW | 2d | 2026-09-15 A | 2027-05-02 | RHD4CZ7A012SW3100 | 18% | -83d |
| RHD4CZ7A012SW1201 |  | Bedding works for GRP Pipe Line 400 mm - (RD-A-1 /2)-Z7-A012-SW | 2d | 2026-10-27 A | 2027-05-04 | RHD4CZ7A012SW1101 | 21% | -56d |
| RHD4CZ7A012SW1301 |  | Installing for GRP Pipe Line 400 mm - (RD-A-1 /2)-Z7-A012-SW | 2d | 2026-10-28 A | 2027-05-23 | RHD4CZ7A012SW1201, RHD4CZ7A012SW3300 | 21% | -66d |
| RHD4CZ7A012SW1401 |  | Primary Test for GRP Pipe Line 400 mm - (RD-A-1 /2)-Z7-A012-SW | 2d | 2027-05-24 | 2027-05-25 | RHD4CZ7A012SW1301 |  | -66d |
| RHD4CZ7A012SW1501 |  | Backfilling and warning tape works for GRP Pipe Line 400 mm - (RD-A-1 /2)-Z7-A012-SW | 2d | 2027-05-26 | 2027-05-27 | RHD4CZ7A012SW1401, RHD4CZ7A012SW1500 |  | -66d |
|  | 6438 | **RHD4-02-002-A012-(SW)-UPVC Pipes - 200 mm diameter** |  | 2026-09-15 | 2027-05-04 |  |  |  |
| RHD4CZ7A012SW2100 |  | Excavation works for UPVC Pipe Line 200 mm - (RD-A-1 /2)-Z7-A012-SW | 2d | 2026-09-15 A | 2026-09-16 A | RHD4CZ7A012SW1101 | 100% |  |
| RHD4CZ7A012SW2200 |  | Bedding works for UPVC Pipe Line 200 mm - (RD-A-1 /2)-Z7-A012-SW | 2d | 2026-10-27 A | 2026-10-28 A | RHD4CZ7A012SW2100 | 100% |  |
| RHD4CZ7A012SW2300 |  | Installing for UPVC Pipe Line 200 mm - (RD-A-1 /2)-Z7-A012-SW | 2d | 2026-10-28 A | 2026-10-29 A | RHD4CZ7A012SW2200 | 100% |  |
| RHD4CZ7A012SW2500 |  | Backfilling and warning tape works for UPVC Pipe Line 200 mm - (RD-A-1 /2)-Z7-A012-SW | 2d | 2026-10-31 A | 2026-11-01 A | RHD4CZ7A012SW2400 | 100% |  |
| RHD4CZ7A012SW2400 |  | Primary Test for UPVC Pipe Line 200 mm - (RD-A-1 /2)-Z7-A012-SW | 2d | 2027-05-03 | 2027-05-04 | RHD4CZ7A012SW2300 |  | -83d |
|  | 7036 | **RHD4-02-002-Z7-A012-Potable Network - PT** |  | 2027-05-05 | 2027-06-12 |  |  |  |
|  | 7040 | **RHD4-02-002-A012-(PT)-HDPE Pipes - 400 mm diameter** |  | 2027-05-05 | 2027-05-31 |  |  |  |
| RHD4CZ7A012PT1103 |  | Excavation works for HDPE Pipline 400 mm - (RD-A-1 /2)-Z7-A012-PT | 3d | 2027-05-05 | 2027-05-08 | RHD4ENSDZ7APPPT130, RHD4ENMSPT2000, RHD4CZ7A012SW2500 |  | -83d |
| RHD4CZ7A012PT1203 |  | Bedding works for HDPE Pipline 400 mm - (RD-A-1 /2)-Z7-A012-PT | 3d | 2027-05-09 | 2027-05-11 | RHD4CZ7A012PT1103 |  | -83d |
| RHD4CZ7A012PT1303 |  | Installing for HDPE Pipline 400 mm - (RD-A-1 /2)-Z7-A012-PT | 4d | 2027-05-12 | 2027-05-20 | RHD4PRSHLDOSPT1000, RHD4PRSHLSTAGPT1000, RHD4CZ7A012PT1203 |  | -83d |
| RHD4CZ7A012PT1403 |  | Primary Test for HDPE Pipline 400 mm - (RD-A-1 /2)-Z7-A012-PT | 2d | 2027-05-26 | 2027-05-27 | RHD4CZ7A012PT1303, RHD4CZ7A012PT5100 |  | -83d |
| RHD4CZ7A012PT1503 |  | Backfilling and warning tape works for HDPE Pipline 400 mm - (RD-A-1 /2)-Z7-A012-PT | 3d | 2027-05-29 | 2027-05-31 | RHD4CZ7A012PT1403 |  | -83d |
|  | 7043 | **RHD4-02-002-A012-(PT)-Butterfly Valve Chamber** |  | 2027-06-01 | 2027-06-09 |  |  |  |
| RHD4CZ7A012PT2100 |  | Excavation and Bedding for Butterfly Valve Chamber for Potable Water Network - (RD-A-1 /2)-Z7-A012-PT | 2d | 2027-06-01 | 2027-06-02 | RHD4ENSDZ7APPPT130, RHD4CZ7A012PT1503 |  | -83d |
| RHD4CZ7A012PT2200 |  | PC works for Butterfly Valve Chamber for Potable Water Network - (RD-A-1 /2)-Z7-A012-PT | 2d | 2027-06-03 | 2027-06-05 | RHD4CZ7A012PT2100 |  | -83d |
| RHD4CZ7A012PT2300 |  | Installation for Butterfly Valve Chamber for Potable Water Network - (RD-A-1 /2)-Z7-A012-PT | 2d | 2027-06-06 | 2027-06-07 | RHD4PRSHLDOSPT1100, RHD4PRSHLDOSPT1400, RHD4PRSHLSTAGPT1100, RHD4PRSHLSTAGPT1400, RHD4CZ7A012PT2200 |  | -83d |
| RHD4CZ7A012PT2400 |  | Backfilling works for Butterfly Valve Chamber for Potable Water Network - (RD-A-1 /2)-Z7-A012-PT | 2d | 2027-06-08 | 2027-06-09 | RHD4CZ7A012PT2300 |  | -83d |
|  | 7044 | **RHD4-02-002-A012-(PT)-Butterfly Valves** |  | 2027-06-08 | 2027-06-12 |  |  |  |
| RHD4CZ7A012PT3101 |  | Installation for Butterfly Valves for Potable Water Network - (RD-A-1 /2)-Z7-A012-PT | 2d | 2027-06-08 | 2027-06-09 | RHD4PRSHLDOSPT1200, RHD4PRSHLSTAGPT1200, RHD4CZ7A012PT2300 |  | -83d |
| RHD4CZ7A012PT3201 |  | Stem and Service box for Butterfly Valves for Potable Water Network - (RD-A-1 /2)-Z7-A012-PT | 2d | 2027-06-10 | 2027-06-12 | RHD4PRSHLDOSPT1300, RHD4PRSHLSTAGPT1300, RHD4CZ7A012PT3101, RHD4CZ7A012PT2400 |  | -83d |
|  | 7049 | **RHD4-02-002-A012-(PT)-Fire Hydrant** |  | 2027-06-01 | 2027-06-12 |  |  |  |
| RHD4CZ7A012PT4100 |  | Excavation and Bedding and Pipe Installation for Fire Hydrant - (RD-A-1 /2)-Z7-A012-PT | 2d | 2027-06-01 | 2027-06-02 | RHD4ENSDZ7APPPT130, RHD4CZ7A012PT1503 |  | -83d |
| RHD4CZ7A012PT4200 |  | Valve Installation for Fire Hydrant - (RD-A-1 /2)-Z7-A012-PT | 2d | 2027-06-03 | 2027-06-05 | RHD4CZ7A012PT4100 |  | -83d |
| RHD4CZ7A012PT4300 |  | Stem for Fire Hydrant - (RD-A-1 /2)-Z7-A012-PT | 2d | 2027-06-06 | 2027-06-07 | RHD4CZ7A012PT4200 |  | -83d |
| RHD4CZ7A012PT4400 |  | Fire Installation for Fire Hydrant - (RD-A-1 /2)-Z7-A012-PT | 2d | 2027-06-08 | 2027-06-09 | RHD4PRSHLDOSPT1500, RHD4PRSHLSTAGPT1500, RHD4CZ7A012PT4300 |  | -83d |
| RHD4CZ7A012PT4500 |  | Protection Barriers for Fire Hydrant - (RD-A-1 /2)-Z7-A012-PT | 2d | 2027-06-10 | 2027-06-12 | RHD4CZ7A012PT4400 |  | -83d |

| ID | WBS | Task | Duration | Start | Finish | Predecessors | Complete | Total float |
| --- | --- | --- | --- | --- | --- | --- | --- | --- |
|  | 7050 | **RHD4-02-002-A012-(PT)-Concrete Encasement** |  | 2027-05-12 | 2027-05-25 |  |  |  |
| RHD4CZ7A012PT5100 |  | Pipe Encasement for Potable Pipelines - (RD-A-1 /2)-Z7-A012-PT | 8d | 2027-05-12 | 2027-05-25 | RHD4CZ7A012PT1303 FF, RHD4CZ7A012PT1303 SS, RHD4CZ7A012PT1203 |  | -83d |
|  | 7051 | **RHD4-02-002-Z7-A012-Irrigation Network - IRR** |  | 2027-05-05 | 2027-06-19 |  |  |  |
|  | 7055 | **RHD4-02-002-A012-(IRR)-HDPE Pipes - 250 mm diameter** |  | 2027-05-05 | 2027-05-20 |  |  |  |
| RHD4CZ7A012IRR1103 |  | Excavation works for HDPE Pipline 250 mm - (RD-A-1 /2)-Z7-A012-IRR | 2d | 2027-05-05 | 2027-05-06 | RHD4ENSDZ7APPIRR140, RHD4ENMSRR2000, RHD4CZ7A012SW2500 |  | -83d |
| RHD4CZ7A012IRR1203 |  | Bedding works for HDPE Pipline 250 mm - (RD-A-1 /2)-Z7-A012-IRR | 2d | 2027-05-08 | 2027-05-09 | RHD4CZ7A012IRR1103 |  | -80d |
| RHD4CZ7A012IRR1303 |  | Installing for HDPE Pipline 250 mm - (RD-A-1 /2)-Z7-A012-IRR | 2d | 2027-05-10 | 2027-05-11 | RHD4PRSHLDOSIRR1000, RHD4PRSHLSTAGIRR1000, RHD4CZ7A012IRR1203 |  | -80d |
| RHD4CZ7A012IRR1403 |  | Primary Test for HDPE Pipline 250 mm - (RD-A-1 /2)-Z7-A012-IRR | 2d | 2027-05-12 | 2027-05-13 | RHD4CZ7A012IRR1303 |  | -80d |
| RHD4CZ7A012IRR1503 |  | Backfilling and warning tape works for HDPE Pipline 250 mm - (RD-A-1 /2)-Z7-A012-IRR | 2d | 2027-05-19 | 2027-05-20 | RHD4CZ7A012IRR1403 |  | -80d |
|  | 6115 | **RHD4-02-002-A012-(IRR)-Gate Valves (Direct Buried)** |  | 2027-05-20 | 2027-05-24 |  |  |  |
| RHD4CZ7A012IRR3100 |  | Installation for Direct Buried Gate Valves - (RD-A-1 /2)-Z7-A012-IRR | 2d | 2027-05-20 | 2027-05-22 | RHD4CZ7A012IRR1304 SS, RHD4CZ7A012IRR1304 FF, RHD4CZ7A012IRR1104 |  | -79d |
| RHD4CZ7A012IRR3200 |  | Stem and Service box for Direct Buried Gate Valves - (RD-A-1 /2)-Z7-A012-IRR | 2d | 2027-05-23 | 2027-05-24 | RHD4CZ7A012IRR3100 |  | -68d |
|  | 8762 | **RHD4-02-002-A012-(IRR)-HDPE Pipes - 500 mm diameter** |  | 2027-05-08 | 2027-05-27 |  |  |  |
| RHD4CZ7A012IRR1107 |  | Excavation works for HDPE Pipline 500 mm - (RD-A-1 /2)-Z7-A012-IRR | 3d | 2027-05-08 | 2027-05-10 | RHD4CZ7A012IRR1103 |  | -83d |
| RHD4CZ7A012IRR1207 |  | Bedding works for HDPE Pipline 500 mm - (RD-A-1 /2)-Z7-A012-IRR | 3d | 2027-05-11 | 2027-05-13 | RHD4CZ7A012IRR1107 |  | -68d |
| RHD4CZ7A012IRR1307 |  | Installing for HDPE Pipline 500 mm - (RD-A-1 /2)-Z7-A012-IRR | 3d | 2027-05-19 | 2027-05-22 | RHD4CZ7A012IRR1207 |  | -68d |
| RHD4CZ7A012IRR1407 |  | Primary Test for HDPE Pipline 500 mm - (RD-A-1 /2)-Z7-A012-IRR | 2d | 2027-05-23 | 2027-05-24 | RHD4CZ7A012IRR1307 |  | -68d |
| RHD4CZ7A012IRR1507 |  | Backfilling and warning tape works for HDPE Pipline 500 mm - (RD-A-1 /2)-Z7-A012-IRR | 3d | 2027-05-25 | 2027-05-27 | RHD4CZ7A012IRR1407, RHD4CZ7A012IRR3200 |  | -68d |
|  | 6111 | **RHD4-02-002-A012-(IRR)-HDPE Pipes - 315 mm diameter** |  | 2027-05-11 | 2027-05-26 |  |  |  |
| RHD4CZ7A012IRR1104 |  | Excavation works for HDPE Pipline 315 mm - (RD-A-1 /2)-Z7-A012-IRR | 2d | 2027-05-11 | 2027-05-12 | RHD4CZ7A012IRR1107 |  | -83d |
| RHD4CZ7A012IRR1204 |  | Bedding works for HDPE Pipline 315 mm - (RD-A-1 /2)-Z7-A012-IRR | 2d | 2027-05-13 | 2027-05-19 | RHD4CZ7A012IRR1104 |  | -83d |
| RHD4CZ7A012IRR1304 |  | Installing for HDPE Pipline 315 mm - (RD-A-1 /2)-Z7-A012-IRR | 2d | 2027-05-20 | 2027-05-22 | RHD4CZ7A012IRR1204 |  | -83d |
| RHD4CZ7A012IRR1404 |  | Primary Test for HDPE Pipline 315 mm - (RD-A-1 /2)-Z7-A012-IRR | 2d | 2027-05-23 | 2027-05-24 | RHD4CZ7A012IRR1304 |  | -83d |
| RHD4CZ7A012IRR1504 |  | Backfilling and warning tape works for HDPE Pipline 315 mm - (RD-A-1 /2)-Z7-A012-IRR | 2d | 2027-05-25 | 2027-05-26 | RHD4CZ7A012IRR1404 |  | -83d |
|  | 6116 | **RHD4-02-002-A012-(IRR)-Butterfly Valve Chamber** |  | 2027-05-27 | 2027-06-05 |  |  |  |
| RHD4CZ7A012IRR2100 |  | Excavation and Bedding for Butterfly Valve Chamber for Irrigation Network - (RD-A-1 /2)-Z7-A012-IRR | 2d | 2027-05-27 | 2027-05-29 | RHD4CZ7A012IRR1504, RHD4CZ7A012IRR3100 |  | -83d |
| RHD4CZ7A012IRR2200 |  | PC works for Butterfly Valve Chamber for Irrigation Network - (RD-A-1 /2)-Z7-A012-IRR | 2d | 2027-05-30 | 2027-05-31 | RHD4CZ7A012IRR2100 |  | -83d |
| RHD4CZ7A012IRR2300 |  | Installation for Butterfly Valve Chamber for Irrigation Network - (RD-A-1 /2)-Z7-A012-IRR | 2d | 2027-06-01 | 2027-06-02 | RHD4CZ7A012IRR2200 |  | -83d |
| RHD4CZ7A012IRR2400 |  | Backfilling works for Butterfly Valve Chamber for Irrigation Network - (RD-A-1 /2)-Z7-A012-IRR | 2d | 2027-06-03 | 2027-06-05 | RHD4CZ7A012IRR2300 |  | -75d |
|  | 6117 | **RHD4-02-002-A012-(IRR)-Butterfly Valves** |  | 2027-06-03 | 2027-06-07 |  |  |  |
| RHD4CZ7A012IRR3101 |  | Installation for Butterfly Valves for Irrigation Network - (RD-A-1 /2)-Z7-A012-IRR | 2d | 2027-06-03 | 2027-06-05 | RHD4CZ7A012IRR2300, RHD4CZ7A012IRR2100 |  | -83d |
| RHD4CZ7A012IRR3201 |  | Stem and Service box for Butterfly Valves for Irrigation Network - (RD-A-1 /2)-Z7-A012-IRR | 2d | 2027-06-06 | 2027-06-07 | RHD4CZ7A012IRR3101, RHD4CZ7A012IRR2400, RHD4CZ7A012IRR1507 |  | -75d |
|  | 6685 | **RHD4-02-002-A012-(IRR)-Wash out Chamber** |  | 2027-06-06 | 2027-06-14 |  |  |  |
| RHD4CZ7A012IRR2101 |  | Excavation and Bedding for Wash out Chamber for Irrigation Network - (RD-A-1 /2)-Z7-A012-IRR | 2d | 2027-06-06 | 2027-06-07 | RHD4CZ7A012IRR3101 |  | -83d |
| RHD4CZ7A012IRR2201 |  | PC works for Wash out Chamber for Irrigation Network - (RD-A-1 /2)-Z7-A012-IRR | 2d | 2027-06-08 | 2027-06-09 | RHD4CZ7A012IRR2101 |  | -83d |
| RHD4CZ7A012IRR2301 |  | Installation for Wash out Chamber for Irrigation Network - (RD-A-1 /2)-Z7-A012-IRR | 2d | 2027-06-10 | 2027-06-12 | RHD4CZ7A012IRR2201 |  | -83d |
| RHD4CZ7A012IRR2401 |  | Backfilling works for Wash out Chamber for Irrigation Network - (RD-A-1 /2)-Z7-A012-IRR | 2d | 2027-06-13 | 2027-06-14 | RHD4CZ7A012IRR2301 |  | -81d |
|  | 6686 | **RHD4-02-002-A012-(IRR)-Wash out Valves** |  | 2027-06-13 | 2027-06-16 |  |  |  |
| RHD4CZ7A012IRR3102 |  | Installation for Wash out Valve for Irrigation Network - (RD-A-1 /2)-Z7-A012-IRR | 2d | 2027-06-13 | 2027-06-14 | RHD4CZ7A012IRR2301, RHD4CZ7A012IRR2101 |  | -83d |
| RHD4CZ7A012IRR3202 |  | Stem and Service box for Wash out Valve for Irrigation Network - (RD-A-1 /2)-Z7-A012-IRR | 2d | 2027-06-15 | 2027-06-16 | RHD4CZ7A012IRR3102, RHD4CZ7A012IRR2401, RHD4CZ7A012IRR3201, RHD4CZ7A012SW1501 |  | -81d |
|  | 1771 | **RHD4-02-002-A012-(IRR)-Concrete Encasement** |  | 2027-06-15 | 2027-06-19 |  |  |  |
| RHD4CZ7A012IRR5100 |  | Pipe Encasement for Irrigation Pipelines - (RD-A-1 /2)-Z7-A012-IRR | 4d | 2027-06-15 | 2027-06-19 | RHD4CZ7A012IRR3102 |  | -83d |
|  | 7085 | **RHD4-02-002-Z7-A012-Medium Voltage Network - MV** |  | 2026-08-04 | 2027-05-31 |  |  |  |
|  | 7088 | **RHD4-02-002-A012-(MV)-Medium Voltage cables 3Cx 500 mm²** |  | 2027-04-13 | 2027-05-08 |  |  |  |
| RHD4CZ7A012MV3100 |  | Installation of Medium Voltage Cables 3Cx 500 mm² - (RD-A-1 /2)-Z7-A012-MV | 9d | 2027-04-13 | 2027-04-22 | RHD4PRSHLDOSMV1100, RHD4ENMSMV2000, RHD4ENMSMV2010, RHD4PRSHLSTAGMV1100, RHD4CZ7A012MV1100 |  | -83d |
| RHD4CZ7A012MV3200 |  | Joints Installation of Medium Voltage Cables 3Cx 500 mm² - (RD-A-1 /2)-Z7-A012-MV | 4d | 2027-04-24 | 2027-04-27 | RHD4PRSHLDOSMV1300, RHD4PRSHLSTAGMV1300, RHD4CZ7A012MV3100 |  | -83d |
| RHD4CZ7A012MV3300 |  | Testing of Medium Voltage Cables 3Cx 500 mm² - (RD-A-1 /2)-Z7-A012-MV | 9d | 2027-04-28 | 2027-05-08 | RHD4CZ7A012MV3200 |  | -83d |
|  | 1793 | **RHD4-02-002-A012-(MV)-Medium Voltage cables 3Cx 50 mm²** |  | 2027-05-09 | 2027-05-10 |  |  |  |
| RHD4CZ7A012MV3401 |  | Termination of Medium Voltage Cables 3Cx 50 mm² - (RD-A-1 /2)-Z7-A012-MV | 2d | 2027-05-09 | 2027-05-10 | RHD4CZ7A012MV3300 |  | -83d |
|  | 1794 | **RHD4-02-002-A012-(MV)-Normally open Point (Outdoor Type)** |  | 2027-05-11 | 2027-05-19 |  |  |  |
| RHD4CZ7A012MV4100 |  | Installation for Normally open Point - (RD-A-1 /2)-Z7-A012-MV | 2d | 2027-05-11 | 2027-05-12 | RHD4CZ7A012MV3401 |  | -83d |
| RHD4CZ7A012MV4200 |  | Termination for Normally open Point - (RD-A-1 /2)-Z7-A012-MV | 2d | 2027-05-13 | 2027-05-19 | RHD4CZ7A012MV4100 |  | -83d |
|  | 1791 | **RHD4-02-002-A012-(MV)-Medium Voltage duct banks** |  | 2026-08-04 | 2026-08-15 |  |  |  |
| RHD4CZ7A012MV2100 |  | Excavation of Duct Banks for Medium Voltage Network - (RD-A-1 /2)-Z7-A012-MV | 5d | 2026-08-04 A | 2026-08-09 A | RHD4CZ7A012RD3100 | 100% |  |
| RHD4CZ7A012MV2200 |  | Installation of Duct Banks for Medium Voltage Network - (RD-A-1 /2)-Z7-A012-MV | 7d | 2026-08-06 A | 2026-08-13 A | RHD4CZ7A012MV2100 | 100% |  |
| RHD4CZ7A012MV2300 |  | Pouring of Duct Banks for Medium Voltage Network - (RD-A-1 /2)-Z7-A012-MV | 5d | 2026-08-09 A | 2026-08-13 A | RHD4CZ7A012MV2200 | 100% |  |
| RHD4CZ7A012MV2400 |  | Backfilling of Duct Banks for Medium Voltage Network - (RD-A-1 /2)-Z7-A012-MV | 4d | 2026-08-11 A | 2026-08-15 A | RHD4CZ7A012MV2300 | 100% |  |
|  | 7086 | **RHD4-02-002-A012-(MV)-Medium Voltage cable trench** |  | 2027-04-01 | 2027-05-31 |  |  |  |
| RHD4CZ7A012MV1100 |  | Excavation for Medium Voltage Trench - (RD-A-1 /2)-Z7-A012-MV | 10d | 2027-04-01 | 2027-04-12 | RHD4ENSDZ7APPMV150, RHD4CZ7A012RD3100, RHD4CZ7L03LV5100 |  | -83d |
| RHD4CZ7A012MV1200 |  | Trench Backfilling for Medium Voltage Network - (RD-A-1 /2)-Z7-A012-MV | 10d | 2027-05-20 | 2027-05-31 | RHD4CZ7A012MV4200 |  | -83d |
|  | 7092 | **RHD4-02-002-Z7-A012-Low Voltage Network - LV** |  | 2026-08-04 | 2027-06-19 |  |  |  |
|  | 7093 | **RHD4-02-002-A012-(LV)-Low Voltage duct banks** |  | 2026-08-04 | 2027-03-25 |  |  |  |
| RHD4CZ7A012LV2100 |  | Excavation of Duct Banks for Low Voltage Network - (RD-A-1 /2)-Z7-A012-LV | 5d | 2026-08-04 A | 2027-03-02 | RHD4ENSDZ7APPLV160, RHD4CZ7A012RW3000, RHD4CZ7A012MV2100, RHD4CZ7A012MV2400 | 50% | -123.02d |
| RHD4CZ7A012LV2200 |  | Installation of Duct Banks for Low Voltage Network - (RD-A-1 /2)-Z7-A012-LV | 8d | 2026-08-06 A | 2027-03-15 | RHD4PRSHLDOSLV1000, RHD4PRSHLSTAGLV1000, RHD4CZ7A012LV2100 | 50% | -123.02d |
| RHD4CZ7A012LV2300 |  | Pouring of Duct Banks for Low Voltage Network - (RD-A-1 /2)-Z7-A012-LV | 5d | 2026-08-09 A | 2027-03-21 | RHD4CZ7A012LV2200 | 50% | -123.02d |
| RHD4CZ7A012LV2400 |  | Backfilling of Duct Banks for Low Voltage Network - (RD-A-1 /2)-Z7-A012-LV | 4d | 2026-08-11 A | 2027-03-25 | RHD4CZ7A012LV2300 | 50% | -123.02d |
|  | 7094 | **RHD4-02-002-A012-(LV)-Low Voltage Drawpit** |  | 2027-06-01 | 2027-06-05 |  |  |  |
| RHD4CZ7A012LV5100 |  | Excavation of Drawpit size 900x900x1000mm for Low Voltage Network - (RD-A-1 /2)-Z7-A012-LV | 2d | 2027-06-01 | 2027-06-02 | RHD4ENSDZ7APPLV160, RHD4CZ7A012LV2300, RHD4CZ7A012MV1200 |  | -83d |
| RHD4CZ7A012LV5200 |  | Installation of Drawpit size 900x900x1000mm for Low Voltage Network - (RD-A-1 /2)-Z7-A012-LV | 2d | 2027-06-03 | 2027-06-05 | RHD4PRSHLDOSLV1400, RHD4PRSHLSTAGLV1400, RHD4CZ7A012LV5100 |  | -83d |
|  | 7095 | **RHD4-02-002-A012-(LV)-Low Voltage cables** |  | 2027-06-06 | 2027-06-19 |  |  |  |

| ID | WBS | Task | Duration | Start | Finish | Predecessors | Complete | Total float |
| --- | --- | --- | --- | --- | --- | --- | --- | --- |
| RHD4CZ7A012LV3100 |  | Excavation for Low Voltage Cables for Low Voltage Network - (RD-A-1 /2)-Z7-A012-LV | 4d | 2027-06-06 | 2027-06-09 | RHD4ENSDZ7APPLV160, RHD4CZ7A012LV2400, RHD4CZ7A012LV5200 |  | -83d |
| RHD4CZ7A012LV3200 |  | Cable Laying of Low Voltage Cables for Low Voltage Network - (RD-A-1 /2)-Z7-A012-LV | 3d | 2027-06-10 | 2027-06-13 | RHD4PRSHLDOSLV1100, RHD4ENMSLV2000, RHD4ENMSLV2010, RHD4PRSHLSTAGLV1100, RHD4CZ7A012LV3100 |  | -83d |
| RHD4CZ7A012LV3300 |  | Warning tape and Backfill for Low Voltage Cables for Low Voltage Network - (RD-A-1 /2)-Z7-A012-LV | 3d | 2027-06-14 | 2027-06-16 | RHD4CZ7A012LV3200 |  | -83d |
| RHD4CZ7A012LV3400 |  | Testing of Low Voltage Cables for Low Voltage Network - (RD-A-1 /2)-Z7-A012-LV | 2d | 2027-06-17 | 2027-06-19 | RHD4CZ7A012LV3300 |  | -83d |
|  | 7098 | **RHD4-02-002-Z7-A012-Street Lighting Network - SL** |  | 2027-06-20 | 2027-07-14 |  |  |  |
|  | 7099 | **RHD4-02-002-A012-(SL)-Street Lighting duct banks** |  |  |  |  |  |  |
|  | 7100 | **RHD4-02-002-A012-(SL)-Street Lighting Drawpit** |  | 2027-06-20 | 2027-06-23 |  |  |  |
| RHD4CZ7A012SL5100 |  | Excavation of Drawpit size 600x600x900mm for Street Lighting Network - (RD-A-1 /2)-Z7-A012-SL | 2d | 2027-06-20 | 2027-06-21 | RHD4ENSDZ7APPSL170, RHD4CZ7A012LV3400 |  | -83d |
| RHD4CZ7A012SL5200 |  | Installation of Drawpit size 600x600x900mm for Street Lighting Network - (RD-A-1 /2)-Z7-A012-SL | 2d | 2027-06-22 | 2027-06-23 | RHD4PRSHLDOSSL1400, RHD4PRSHLSTAGSL1400, RHD4CZ7A012SL5100 |  | -83d |
|  | 7101 | **RHD4-02-002-A012-(SL)-Street Lighting cables** |  | 2027-06-24 | 2027-07-03 |  |  |  |
| RHD4CZ7A012SL3100 |  | Excavation for Street Lighting Cables for Street Lighting Network - (RD-A-1 /2)-Z7-A012-SL | 2d | 2027-06-24 | 2027-06-26 | RHD4ENSDZ7APPSL170, RHD4CZ7A012SL5200 |  | -83d |
| RHD4CZ7A012SL3200 |  | Cable Laying of Street Lighting Cables for Street Lighting Network - (RD-A-1 /2)-Z7-A012-SL | 2d | 2027-06-27 | 2027-06-28 | RHD4PRSHLDOSSL1100, RHD4ENMSSL2000, RHD4ENMSSL2010, RHD4PRSHLSTAGSL1100, RHD4CZ7A012SL3100 |  | -83d |
| RHD4CZ7A012SL3300 |  | Warning tape and Backfill for Street Lighting Cables for Street Lighting Network - (RD-A-1 /2)-Z7-A012-SL | 2d | 2027-06-29 | 2027-06-30 | RHD4CZ7A012SL3200 |  | -83d |
| RHD4CZ7A012SL3400 |  | Testing of Street Lighting Cables for Street Lighting Network - (RD-A-1 /2)-Z7-A012-SL | 2d | 2027-07-01 | 2027-07-03 | RHD4CZ7A012SL3300 |  | -83d |
|  | 7102 | **RHD4-02-002-A012-(SL)-Street Lighting Poles** |  | 2027-07-04 | 2027-07-14 |  |  |  |
| RHD4CZ7A012SL1100 |  | Excavation for RC Base for Lighting Poles for Street Lighting Network - (RD-A-1 /2)-Z7-A012-SL | 2d | 2027-07-04 | 2027-07-05 | RHD4ENSDZ7APPSL170, RHD4CZ7A012SL3400 |  | -83d |
| RHD4CZ7A012SL1200 |  | Installation for RC Base for Lighting Poles for Street Lighting Network - (RD-A-1 /2)-Z7-A012-SL | 2d | 2027-07-06 | 2027-07-07 | RHD4CZ7A012SL1100 |  | -83d |
| RHD4CZ7A012SL1300 |  | Backfill for RC Base for Lighting Poles for Street Lighting Network - (RD-A-1 /2)-Z7-A012-SL | 2d | 2027-07-08 | 2027-07-10 | RHD4CZ7A012SL1200 |  | -83d |
| RHD4CZ7A012SL1400 |  | Installation for Lighting Poles for Street Lighting Network - (RD-A-1 /2)-Z7-A012-SL | 2d | 2027-07-11 | 2027-07-12 | RHD4PRSHLDOSSL1200, RHD4ENMSSL2000, RHD4ENMSSL2010, RHD4PRSHLSTAGSL1200, RHD4CZ7A012SL1300, RHD4CZ7A012SL3400 |  | -83d |
| RHD4CZ7A012SL1500 |  | Luminaire Installation for Lighting Poles for Street Lighting Network - (RD-A-1 /2)-Z7-A012-SL | 2d | 2027-07-13 | 2027-07-14 | RHD4PRSHLDOSSL1300, RHD4PRSHLSTAGSL1300, RHD4CZ7A012SL1400 |  | -83d |
|  | 7104 | **RHD4-02-002-A012-(SL)-Street Lighting Earthing System** |  |  |  |  |  |  |
|  | 7110 | **RHD4-02-002-Z7-A012-Telecommunications Network - TC** |  | 2026-08-04 | 2027-07-31 |  |  |  |
|  | 7111 | **RHD4-02-002-A012-(TC)-Telecommunications Ducts** |  | 2027-07-15 | 2027-07-31 |  |  |  |
| RHD4CZ7A012TC2100 |  | Excavation of HDPE Ducts for Telecom Network - (RD-A-1 /2)-Z7-A012-TC | 4d | 2027-07-15 | 2027-07-19 | RHD4ENSDZ7APPTC190, RHD4CZ7A012SL1500 |  | -83d |
| RHD4CZ7A012TC2200 |  | Installation of HDPE Ducts for Telecom Network - (RD-A-1 /2)-Z7-A012-TC | 6d | 2027-07-20 | 2027-07-26 | RHD4PRSHLDOSTC1000, RHD4PRSHLSTAGTC1000, RHD4CZ7A012TC2100 |  | -83d |
| RHD4CZ7A012TC2400 |  | Backfilling of HDPE Ducts for Telecom Network - (RD-A-1 /2)-Z7-A012-TC | 4d | 2027-07-27 | 2027-07-31 | RHD4CZ7A012TC2200, RHD4CZ7A012TC5200 |  | -83d |
|  | 7112 | **RHD4-02-002-A012-(TC)-Telecommunications Manholes** |  | 2027-07-20 | 2027-07-26 |  |  |  |
| RHD4CZ7A012TC5100 |  | Excavation for Manholes for Telecom Network - (RD-A-1 /2)-Z7-A012-TC | 3d | 2027-07-20 | 2027-07-22 | RHD4ENSDZ7APPTC190, RHD4CZ7A012TC2100 |  | -83d |
| RHD4CZ7A012TC5200 |  | Installation of Manholes for Telecom Network - (RD-A-1 /2)-Z7-A012-TC | 3d | 2027-07-24 | 2027-07-26 | RHD4PRSHLDOSTC1200, RHD4PRSHLSTAGTC1200, RHD4CZ7A012TC5100, RHD4CZ7A012TC2200 SS |  | -83d |
|  | 7113 | **RHD4-02-002-A012-(TC)-Telecomminications Road Crossings** |  | 2026-08-04 | 2026-08-12 |  |  |  |
| RHD4CZ7A012TC3100 |  | Excavation for Road Crossings for Telecom Network - (RD-A-1 /2)-Z7-A012-TC | 2d | 2026-08-04 A | 2026-08-05 A | RHD4ENSDZ7APPTC190, RHD4CZ7A012ST1106 | 100% |  |
| RHD4CZ7A012TC3200 |  | Installation of Road Crossings for Telecom Network - (RD-A-1 /2)-Z7-A012-TC | 2d | 2026-08-06 A | 2026-08-08 A | RHD4PRSHLDOSTC1100, RHD4PRSHLSTAGTC1100, RHD4CZ7A012TC3100 | 100% |  |
| RHD4CZ7A012TC3300 |  | Pouring of Road Crossings for Telecom Network - (RD-A-1 /2)-Z7-A012-TC | 2d | 2026-08-09 A | 2026-08-10 A | RHD4CZ7A012TC3200 | 100% |  |
| RHD4CZ7A012TC3400 |  | Backfilling of Road Crossings for Telecom Network - (RD-A-1 /2)-Z7-A012-TC | 2d | 2026-08-11 A | 2026-08-12 A | RHD4CZ7A012TC3300 | 100% |  |
|  | 7114 | **RHD4-02-002-Z7-A012-Information and Communication Technologies - ICT** |  | 2026-08-04 | 2027-09-12 |  |  |  |
|  | 7115 | **RHD4-02-002-A012-(ICT)-Information and Communication Technologies Ducts** |  | 2027-08-01 | 2027-09-05 |  |  |  |
| RHD4CZ7A012ICT2100 |  | Excavation of HDPE Ducts for ICT Network - (RD-A-1 /2)-Z7-A012-ICT | 9d | 2027-08-01 | 2027-08-10 | RHD4ENSDZ7APPICT200, RHD4CZ7A012TC3100, RHD4CZ7A012TC2400 |  | -83d |
| RHD4CZ7A012ICT2200 |  | Installation of HDPE Ducts for ICT Network - (RD-A-1 /2)-Z7-A012-ICT | 13d | 2027-08-11 | 2027-08-25 | RHD4PRSHLDOSICT1000, RHD4PRSHLSTAGICT1000, RHD4CZ7A012ICT2100 |  | -83d |
| RHD4CZ7A012ICT2400 |  | Backfilling of HDPE Ducts for ICT Network - (RD-A-1 /2)-Z7-A012-ICT | 9d | 2027-08-26 | 2027-09-05 | RHD4CZ7A012ICT2200 |  | -83d |
|  | 7116 | **RHD4-02-002-A012-(ICT)-Information and Communication Technologies Manholes** |  | 2027-09-06 | 2027-09-12 |  |  |  |
| RHD4CZ7A012ICT5100 |  | Excavation for Manholes for ICT Network - (RD-A-1 /2)-Z7-A012-ICT | 3d | 2027-09-06 | 2027-09-08 | RHD4ENSDZ7APPICT200, RHD4CZ7A012ICT2400 |  | -83d |
| RHD4CZ7A012ICT5200 |  | Installation of Manholes for ICT Network - (RD-A-1 /2)-Z7-A012-ICT | 3d | 2027-09-09 | 2027-09-12 | RHD4PRSHLDOSICT1200, RHD4PRSHLSTAGICT1200, RHD4CZ7A012ICT5100 |  | -83d |
|  | 7117 | **RHD4-02-002-A012-(ICT)-Information and Communication Technologies Road Crossings** |  | 2026-08-04 | 2026-08-12 |  |  |  |
| RHD4CZ7A012ICT3100 |  | Excavation for Road Crossings for ICT Network - (RD-A-1 /2)-Z7-A012-ICT | 2d | 2026-08-04 A | 2026-08-05 A | RHD4ENSDZ7APPICT200, RHD4CZ7A012ST1106 | 100% |  |
| RHD4CZ7A012ICT3200 |  | Installation of Road Crossings for ICT Network - (RD-A-1 /2)-Z7-A012-ICT | 2d | 2026-08-06 A | 2026-08-08 A | RHD4PRSHLDOSICT1100, RHD4PRSHLSTAGICT1100, RHD4CZ7A012ICT3100, RHD4CZ7A012TC3200 SS | 100% |  |
| RHD4CZ7A012ICT3300 |  | Pouring of Road Crossings for ICT Network - (RD-A-1 /2)-Z7-A012-ICT | 2d | 2026-08-09 A | 2026-08-10 A | RHD4CZ7A012ICT3200 | 100% |  |
| RHD4CZ7A012ICT3400 |  | Backfilling of Road Crossings for ICT Network - (RD-A-1 /2)-Z7-A012-ICT | 2d | 2026-08-11 A | 2026-08-12 A | RHD4CZ7A012ICT3300 | 100% |  |
|  | 7105 | **RHD4-02-002-Z7-A012-Landscape Network - LS** |  |  |  |  |  |  |
|  | 7106 | **RHD4-02-002-A012-(LS)-Landscape Lighting cables** |  |  |  |  |  |  |
|  | 7107 | **RHD4-02-002-A012-(LS)-Landscape Feeder Pillars** |  |  |  |  |  |  |
|  | 7108 | **RHD4-02-002-A012-(LS)-Landscape Bollard Poles** |  |  |  |  |  |  |
|  | 7109 | **RHD4-02-002-A012-(LS)-Landscape Feeder Pillars Earthing** |  |  |  |  |  |  |
|  | 7118 | **RHD4-02-002-Z7-A012-Security Network - CCTV** |  |  |  |  |  |  |
|  | 7119 | **RHD4-02-002-A012-(CCTV)-Civil Works** |  |  |  |  |  |  |
|  | 6001 | **RHD4-02-002-Z7-C02** |  | 2026-06-11 | 2028-06-07 |  |  |  |
|  | 6076 | **RHD4-02-002-Z7-C02-Crossings Potable Network - PTCr** |  |  |  |  |  |  |
|  | 6078 | **RHD4-02-002-C02-(PTCr)-HDPE Pipes - 160 mm diameter** |  |  |  |  |  |  |
|  | 6082 | **RHD4-02-002-C02-(PTCr)-Gate Valves (Direct Buried)** |  |  |  |  |  |  |
|  | 6089 | **RHD4-02-002-C02-(PTCr)-Fire Hydrant** |  |  |  |  |  |  |
|  | 6123 | **RHD4-02-002-Z7-C02-Crossings Irrigation Network - IRRC** |  |  |  |  |  |  |
|  | 6128 | **RHD4-02-002-C02-(IRRC)-HDPE Pipes - 315 mm diameter** |  |  |  |  |  |  |
|  | 6133 | **RHD4-02-002-C02-(IRRC)-Butterfly Valve Chamber** |  |  |  |  |  |  |
|  | 6134 | **RHD4-02-002-C02-(IRRC)-Butterfly Valves** |  |  |  |  |  |  |
|  | 6180 | **RHD4-02-002-Z7-C02-Road Works - RD** |  | 2027-03-03 | 2028-06-07 |  |  |  |
|  | 6181 | **RHD4-02-002-C02-(RD)-Subgrade** |  | 2027-03-03 | 2027-03-17 |  |  |  |
| RHD4CZ7C02RD1100 |  | Supply, lay and compaction subgrade compacted thickness 300 mm for Roads - (RD-C-2)-Z7-C02-RD | 9d | 2027-03-03 | 2027-03-17 | RHD4ENSDZ7APPEW100, RHD4ENSDZ7APPRD220, RHD4CZ7C02ST1509, RHD4CZ7C02ICT3400, RHD4CZ7C02TC3400 |  | -197.02d |
|  | 6182 | **RHD4-02-002-C02-(RD)-Aggregate Base Course** |  | 2027-03-17 | 2027-03-24 |  |  |  |
| RHD4CZ7C02RD2100 |  | Supply, lay and compaction Aggregate base course compacted thickness 300 mmfor Roads - (RD-C-2)-Z7-C02-RD | 6d | 2027-03-17 | 2027-03-24 | RHD4PRSHLDOSRD1000, RHD4PRSHLSTAGRD1000, RHD4CZ7C02RD1100 |  | -197.02d |
|  | 6183 | **RHD4-02-002-C02-(RD)-Bituminous base course Two Layers, including (MC1)&(RC2)** |  | 2027-03-24 | 2028-04-09 |  |  |  |
| RHD4CZ7C02RD3100 |  | Supply, lay and Asphaltic base course including Prime Coat (MC1) for 1st Layer - (RD-C-2)-Z7-C02-RD | 3d | 2027-03-24 | 2027-03-28 | RHD4PRSHLDOSRD1100, RHD4ENMSASPH2000, RHD4ENMSASPH2010, RHD4PRSHLSTAGRD1100, RHD4CZ7C02RD2100 |  | -197.02d |

| ID | WBS | Task | Duration | Start | Finish | Predecessors | Complete | Total float |
| --- | --- | --- | --- | --- | --- | --- | --- | --- |
| RHD4CZ7C02RD3200 |  | Supply, lay and Asphaltic base course including Tack Coat (RC2) for 2nd Layer - (RD-C-2)-Z7-C02-RD | 3d | 2028-04-06 | 2028-04-09 | RHD4PRSHLDOSRD1100, RHD4PRSHLSTAGRD1100, RHD4CZ7C02CCTV4200 |  | -131d |
|  | 6185 | **RHD4-02-002-C02-(RD)-Precast Concrete Curb** |  | 2028-04-10 | 2028-04-16 |  |  |  |
| RHD4CZ7C02RD5100 |  | Supply and installation Precast Concrete Kerb for Roads - (RD-C-2)-Z7-C02-RD | 6d | 2028-04-10 | 2028-04-16 | RHD4PRSHLDOSRD1200, RHD4ENMSRD2000, RHD4ENMSRD2010, RHD4PRSHLSTAGRD1200, RHD4CZ7C02RD3200 |  | -131d |
|  | 6188 | **RHD4-02-002-C02-(RD)-Traffic Signage** |  | 2028-05-15 | 2028-05-22 |  |  |  |
| RHD4CZ7C02RD8100 |  | Installation of Traffic Signage for Road Network - (RD-C-2)-Z7-C02-RD | 6d | 2028-05-15 | 2028-05-22 | RHD4PRSHLDOSRD1600, RHD4PRSHLSTAGRD1600, RHD4CZ7C02RD5100, RHD4CZ7C02ICT2400, RHD4CZ7A012RD8100, RHD4CZ7C02PT4500, RHD4CZ7C013RD8100 |  | -152.02d |
|  | 6186 | **RHD4-02-002-C02-(RD)-Precast Interlocking Block Pavers** |  |  |  |  |  |  |
|  | 6184 | **RHD4-02-002-C02-(RD)-Bituminous concrete wearing course including tack coat (RC2)** |  | 2028-05-28 | 2028-05-30 |  |  |  |
| RHD4CZ7C02RD4100 |  | Supply, lay and compaction Asphaltic wearing course including tack Coat (RC2)for Road Network - (RD-C-2)-Z7-C02-RD | 2d | 2028-05-28 | 2028-05-30 | RHD4CZ7C02RD5100, RHD4CZ7A012RD4100 |  | -158.06d |
|  | 6187 | **RHD4-02-002-C02-(RD)-Pavement Marking** |  | 2028-06-04 | 2028-06-07 |  |  |  |
| RHD4CZ7C02RD7100 |  | Pavement Markings for Road Network - (RD-C-2)-Z7-C02-RD | 3d | 2028-06-04 | 2028-06-07 | RHD4PRSHLDOSRD1500, RHD4PRSHLSTAGRD1500, RHD4CZ7C02RD4100, RHD4CZ7A012RD7100 |  | -162.06d |
|  | 6005 | **RHD4-02-002-Z7-C02-Storm Network - ST** |  | 2026-08-25 | 2027-10-03 |  |  |  |
|  | 6015 | **RHD4-02-002-C02-(ST)-GRP Pipes - 1300 mm diameter** |  | 2026-09-15 | 2027-02-24 |  |  |  |
| RHD4CZ7C02ST1109 |  | Excavation works for GRP Pipe Line 1300 mm - (RD-C-2)-Z7-C02-ST | 2d | 2026-09-15 A | 2027-02-14 | RHD4ENSDZ7APPST110, RHD4CZ7A012ST1106 | 55% | -197.02d |
| RHD4CZ7C02ST1209 |  | Bedding works for GRP Pipe Line 1300 mm - (RD-C-2)-Z7-C02-ST | 2d | 2027-02-14 | 2027-02-16 | RHD4CZ7C02ST1109 |  | -191.02d |
| RHD4CZ7C02ST1309 |  | Installing for GRP Pipe Line 1300 mm - (RD-C-2)-Z7-C02-ST | 2d | 2027-02-16 | 2027-02-18 | RHD4PRSHLSTAGST1006, RHD4CZ7C02ST1209, RHD4PRSHLDOSST1606, RHD4PRSHLPOST1000, RHD4PRSHLDOSST1006, RHD4PRSHLDOSST1605, RHD4PRSHLDOSST1005 |  | -191.02d |
| RHD4CZ7C02ST1409 |  | Primary Test for GRP Pipe Line 1300 mm - (RD-C-2)-Z7-C02-ST | 2d | 2027-02-18 | 2027-02-21 | RHD4CZ7C02ST1309 |  | -191.02d |
| RHD4CZ7C02ST1509 |  | Backfilling and warning tape works for GRP Pipe Line 1300 mm - (RD-C-2)-Z7-C02-ST | 2d | 2027-02-21 | 2027-02-24 | RHD4CZ7C02ST1409 |  | -191.02d |
|  | 6394 | **RHD4-02-002-C02-(ST)-GRP Pipes - 1400 mm diameter** |  | 2026-09-15 | 2027-07-08 |  |  |  |
| RHD4CZ7C02ST1110 |  | Excavation works for GRP Pipe Line 1400 mm - (RD-C-2)-Z7-C02-ST | 2d | 2026-09-15 A | 2026-09-20 A | RHD4CZ7C032TC2400, RHD4CZ7C02RW3000, RHD4CZ7C02ST1109 | 100% |  |
| RHD4CZ7C02ST1210 |  | Bedding works for GRP Pipe Line 1400 mm - (RD-C-2)-Z7-C02-ST | 2d | 2026-10-17 A | 2027-07-01 | RHD4CZ7C02ST1110 | 80% | -175d |
| RHD4CZ7C02ST1310 |  | Installing for GRP Pipe Line 1400 mm - (RD-C-2)-Z7-C02-ST | 2d | 2026-10-19 A | 2027-07-04 | RHD4CZ7C02ST1210 | 70% | -175d |
| RHD4CZ7C02ST1410 |  | Primary Test for GRP Pipe Line 1400 mm - (RD-C-2)-Z7-C02-ST | 2d | 2027-07-05 | 2027-07-06 | RHD4CZ7C02ST1310 |  | -175d |
| RHD4CZ7C02ST1510 |  | Backfilling and warning tape works for GRP Pipe Line 1400 mm - (RD-C-2)-Z7-C02-ST | 2d | 2027-07-07 | 2027-07-08 | RHD4CZ7C02ST1410 |  | -175d |
|  | 3743 | **RHD4-02-002-C02-(ST)-GRP Pipes - 1100 mm diameter** |  | 2027-06-30 | 2027-07-11 |  |  |  |
| RHD4CZ7C02ST1107 |  | Excavation works for GRP Pipe Line 1100 mm - (RD-C-2)-Z7-C02-ST | 2d | 2027-06-30 | 2027-07-01 | RHD4CZ7C02ST1110 SS, RHD4CZ7C02ST1109 |  | -185d |
| RHD4CZ7C02ST1207 |  | Bedding works for GRP Pipe Line 1100 mm - (RD-C-2)-Z7-C02-ST | 2d | 2027-07-03 | 2027-07-04 | RHD4CZ7C02ST1107 |  | -175d |
| RHD4CZ7C02ST1307 |  | Installing for GRP Pipe Line 1100 mm - (RD-C-2)-Z7-C02-ST | 2d | 2027-07-05 | 2027-07-06 | RHD4CZ7C02ST1207 |  | -175d |
| RHD4CZ7C02ST1407 |  | Primary Test for GRP Pipe Line 1100 mm - (RD-C-2)-Z7-C02-ST | 2d | 2027-07-07 | 2027-07-08 | RHD4CZ7C02ST1307 |  | -175d |
| RHD4CZ7C02ST1507 |  | Backfilling and warning tape works for GRP Pipe Line 1100 mm - (RD-C-2)-Z7-C02-ST | 2d | 2027-07-10 | 2027-07-11 | RHD4CZ7C02ST1407, RHD4CZ7C02ST1510 |  | -175d |
|  | 2039 | **RHD4-02-002-C02-(ST)-GRP Pipes - 1000 mm diameter** |  | 2026-11-01 | 2027-07-17 |  |  |  |
| RHD4CZ7C02ST1106 |  | Excavation works for GRP Pipe Line 1000 mm - (RD-C-2)-Z7-C02-ST | 3d | 2026-11-01 A | 2027-07-05 | RHD4CZ7C02ST1107 | 51% | -185d |
| RHD4CZ7C02ST1206 |  | Bedding works for GRP Pipe Line 1000 mm - (RD-C-2)-Z7-C02-ST | 3d | 2026-11-02 A | 2027-07-08 | RHD4CZ7C02ST1106 | 51% | -177d |
| RHD4CZ7C02ST1306 |  | Installing for GRP Pipe Line 1000 mm - (RD-C-2)-Z7-C02-ST | 2d | 2026-11-03 A | 2027-07-11 | RHD4CZ7C02ST1206 | 51% | -177d |
| RHD4CZ7C02ST1406 |  | Primary Test for GRP Pipe Line 1000 mm - (RD-C-2)-Z7-C02-ST | 2d | 2027-07-12 | 2027-07-13 | RHD4CZ7C02ST1306 |  | -177d |
| RHD4CZ7C02ST1506 |  | Backfilling and warning tape works for GRP Pipe Line 1000 mm - (RD-C-2)-Z7-C02-ST | 3d | 2027-07-14 | 2027-07-17 | RHD4CZ7C02ST1406, RHD4CZ7C02ST1507 |  | -177d |
|  | 5254 | **RHD4-02-002-C02-(ST)-GRP Pipes - 900 mm diameter** |  | 2026-11-01 | 2027-07-17 |  |  |  |
| RHD4CZ7C02ST1105 |  | Excavation works for GRP Pipe Line 900 mm - (RD-C-2)-Z7-C02-ST | 2d | 2026-11-01 A | 2027-07-07 | RHD4CZ7C02ST1106 | 30% | -185d |
| RHD4CZ7C02ST1205 |  | Bedding works for GRP Pipe Line 900 mm - (RD-C-2)-Z7-C02-ST | 2d | 2026-11-03 A | 2027-07-10 | RHD4CZ7C02ST1105 | 30% | -177d |
| RHD4CZ7C02ST1305 |  | Installing for GRP Pipe Line 900 mm - (RD-C-2)-Z7-C02-ST | 2d | 2026-11-05 A | 2027-07-12 | RHD4CZ7C02ST1205 | 30% | -177d |
| RHD4CZ7C02ST1405 |  | Primary Test for GRP Pipe Line 900 mm - (RD-C-2)-Z7-C02-ST | 2d | 2027-07-13 | 2027-07-14 | RHD4CZ7C02ST1305 |  | -177d |
| RHD4CZ7C02ST1505 |  | Backfilling and warning tape works for GRP Pipe Line 900 mm - (RD-C-2)-Z7-C02-ST | 2d | 2027-07-15 | 2027-07-17 | RHD4CZ7C02ST1405 |  | -177d |
|  | 6024 | **RHD4-02-002-C02-(ST)-MH Works - 2000 mm diameter** |  | 2026-09-12 | 2027-10-03 |  |  |  |
| RHD4CZ7C02ST3102 |  | Excavation and PC Blinding works for MH 2000 mm - (RD-C-2)-Z7-C02-ST | 5d | 2026-09-12 A | 2027-07-20 | RHD4ENSDZ7APPST110, RHD4ENMSST2000, RHD4CZ7C02ST2100 | 50% | -178d |
| RHD4CZ7C02ST3202 |  | Installation of Base for MH 2000 mm - (RD-C-2)-Z7-C02-ST | 5d | 2026-09-19 A | 2027-07-26 | RHD4PRSHLSTAGST1606, RHD4CZ7C02ST3102 |  | -141d |
| RHD4CZ7C02ST3302 |  | MH Ring and C.Slab works and Backfilling works for MH 2000 mm - (RD-C-2)-Z7-C02-ST | 5d | 2027-07-27 | 2027-08-01 | RHD4PRSHLDOSST1606, RHD4CZ7C02ST3202 |  | -141d |
| RHD4CZ7C02ST3402 |  | Steel Cover for MH 2000 mm - (RD-C-2)-Z7-C02-ST | 4d | 2027-09-22 | 2027-09-27 | RHD4PRSHLDOSST1706, RHD4PRSHLSTAGST1706, RHD4CZ7C02ST3302, RHD4CZ7C02ST1500, RHD4CZ7C02PT3202 |  | -185d |
| RHD4CZ7C02ST3502 |  | Finishing, Benching, Testing works for MH 2000 mm - (RD-C-2)-Z7-C02-ST | 5d | 2027-09-28 | 2027-10-03 | RHD4CZ7C02ST3402 |  | -185d |
|  | 6023 | **RHD4-02-002-C02-(ST)-MH Works - 1500 mm diameter** |  | 2027-07-21 | 2027-08-07 |  |  |  |
| RHD4CZ7C02ST3101 |  | Excavation and PC Blinding works for MH 1500 mm - (RD-C-2)-Z7-C02-ST | 2d | 2027-07-21 | 2027-07-22 | RHD4ENSDZ7APPST110, RHD4ENMSST2000, RHD4CZ7C02ST3102 |  | -178d |
| RHD4CZ7C02ST3201 |  | Installation of Base for MH 1500 mm - (RD-C-2)-Z7-C02-ST | 2d | 2027-07-24 | 2027-07-25 | RHD4PRSHLSTAGST1606, RHD4CZ7C02ST3101 |  | -176d |
| RHD4CZ7C02ST3301 |  | MH Ring and C.Slab works and Backfilling works for MH 1500 mm - (RD-C-2)-Z7-C02-ST | 2d | 2027-07-26 | 2027-07-27 | RHD4PRSHLDOSST1606, RHD4CZ7C02ST3201 |  | -176d |
| RHD4CZ7C02ST3401 |  | Steel Cover for MH 1500 mm - (RD-C-2)-Z7-C02-ST | 2d | 2027-07-28 | 2027-07-29 | RHD4PRSHLDOSST1706, RHD4PRSHLSTAGST1706, RHD4CZ7C02ST3301, RHD4CZ7C02ST1500 |  | -162d |
| RHD4CZ7C02ST3501 |  | Finishing, Benching, Testing works for MH 1500 mm - (RD-C-2)-Z7-C02-ST | 2d | 2027-08-05 | 2027-08-07 | RHD4CZ7C02ST3401, RHD4CZ7C02ST2500 |  | -167d |
|  | 6022 | **RHD4-02-002-C02-(ST)-MH Works - 1200 mm diameter** |  | 2027-08-02 | 2027-08-14 |  |  |  |
| RHD4CZ7C02ST3100 |  | Excavation and PC Blinding works for MH 1200 mm - (RD-C-2)-Z7-C02-ST | 2d | 2027-08-02 | 2027-08-04 | RHD4ENSDZ7APPST110, RHD4ENMSST2000, RHD4ENMSST2010, RHD4CZ7C02ST3101, RHD4CZ2L102PT3202 |  | -186.02d |
| RHD4CZ7C02ST3200 |  | Installation of Base for MH 1200 mm - (RD-C-2)-Z7-C02-ST | 2d | 2027-08-04 | 2027-08-07 | RHD4PRSHLSTAGST1606, RHD4CZ7C02ST3100 |  | -186.02d |
| RHD4CZ7C02ST3300 |  | MH Ring and C.Slab works and Backfilling works for MH 1200 mm - (RD-C-2)-Z7-C02-ST | 2d | 2027-08-07 | 2027-08-09 | RHD4PRSHLDOSST1606, RHD4CZ7C02ST3200, RHD4CZ2L011RD7100, RHD4CZ5L016PT3202, RHD4CZ5L016IRR3201 |  | -186.02d |
| RHD4CZ7C02ST3400 |  | Steel Cover for MH 1200 mm - (RD-C-2)-Z7-C02-ST | 2d | 2027-08-09 | 2027-08-11 | RHD4PRSHLDOSST1706, RHD4PRSHLSTAGST1706, RHD4CZ7C02ST3300, RHD4CZ7C02ST2500, RHD4CZ7C02ST1500 |  | -176.02d |
| RHD4CZ7C02ST3500 |  | Finishing, Benching, Testing works for MH 1200 mm - (RD-C-2)-Z7-C02-ST | 2d | 2027-08-11 | 2027-08-14 | RHD4CZ7C02ST3400 |  | -176.02d |
|  | 6014 | **RHD4-02-002-C02-(ST)-GRP Pipes - 1200 mm diameter** |  | 2027-02-14 | 2027-07-19 |  |  |  |
| RHD4CZ7C02ST1108 |  | Excavation works for GRP Pipe Line 1200 mm - (RD-C-2)-Z7-C02-ST | 2d | 2027-02-14 | 2027-02-16 | RHD4ENSDZ7APPST110, RHD4CZ7C02ST1109 |  | -147.04d |
| RHD4CZ7C02ST1208 |  | Bedding works for GRP Pipe Line 1200 mm - (RD-C-2)-Z7-C02-ST | 2d | 2027-02-16 | 2027-02-18 | RHD4CZ7C02ST1108 |  | -147.04d |
| RHD4CZ7C02ST1308 |  | Installing for GRP Pipe Line 1200 mm - (RD-C-2)-Z7-C02-ST | 2d | 2027-02-18 | 2027-02-21 | RHD4PRSHLSTAGST1006, RHD4CZ7C02ST1208, RHD4CZ7C02ST1309, RHD4PRSHLDOSST1606, RHD4PRSHLPOST1000, RHD4PRSHLDOSST1006, RHD4PRSHLDOSST1605, RHD4PRSHLDOSST1005 |  | -147.04d |
| RHD4CZ7C02ST1408 |  | Primary Test for GRP Pipe Line 1200 mm - (RD-C-2)-Z7-C02-ST | 2d | 2027-02-21 | 2027-02-24 | RHD4CZ7C02ST1308, RHD4CZ7C02ST1409 |  | -147.04d |
| RHD4CZ7C02ST1508 |  | Backfilling and warning tape works for GRP Pipe Line 1200 mm - (RD-C-2)-Z7-C02-ST | 2d | 2027-07-18 | 2027-07-19 | RHD4CZ7C02ST1408, RHD4CZ7C02ST1509, RHD4CZ7C02ST1506, RHD4CZ7C02ST1505, RHD4CZ7C02ST4600 |  | -177d |
|  | 6010 | **RHD4-02-002-C02-(ST)-GRP Pipes - 800 mm diameter** |  |  |  |  |  |  |
|  | 6008 | **RHD4-02-002-C02-(ST)-GRP Pipes - 600 mm diameter** |  |  |  |  |  |  |
|  | 6007 | **RHD4-02-002-C02-(ST)-GRP Pipes - 500 mm diameter** |  | 2027-07-08 | 2027-07-19 |  |  |  |
| RHD4CZ7C02ST1101 |  | Excavation works for GRP Pipe Line 500 mm - (RD-C-2)-Z7-C02-ST | 2d | 2027-07-08 | 2027-07-10 | RHD4ENSDZ7APPST110, RHD4CZ7C02ST1105, RHD4CZ9L05PT2402, RHD4CZ2L011SL1500, RHD4CZ9L05PT3203 |  | -185d |
| RHD4CZ7C02ST1201 |  | Bedding works for GRP Pipe Line 500 mm - (RD-C-2)-Z7-C02-ST | 2d | 2027-07-11 | 2027-07-12 | RHD4CZ7C02ST1101 |  | -176d |

| ID | WBS | Task | Duration | Start | Finish | Predecessors | Complete | Total float |
| --- | --- | --- | --- | --- | --- | --- | --- | --- |
| RHD4CZ7C02ST1301 |  | Installing for GRP Pipe Line 500 mm - (RD-C-2)-Z7-C02-ST | 2d | 2027-07-13 | 2027-07-14 | RHD4PRSHLSTAGST1006, RHD4CZ7C02ST1201, RHD4PRSHLDOSST1606, RHD4PRSHLPOST1000, RHD4PRSHLDOSST1006, RHD4PRSHLDOSST1605, RHD4PRSHLDOSST1005 |  | -176d |
| RHD4CZ7C02ST1401 |  | Primary Test for GRP Pipe Line 500 mm - (RD-C-2)-Z7-C02-ST | 2d | 2027-07-15 | 2027-07-17 | RHD4CZ7C02ST1301 |  | -176d |
| RHD4CZ7C02ST1501 |  | Backfilling and warning tape works for GRP Pipe Line 500 mm - (RD-C-2)-Z7-C02-ST | 2d | 2027-07-18 | 2027-07-19 | RHD4CZ7C02ST1401 |  | -176d |
|  | 6006 | **RHD4-02-002-C02-(ST)-GRP Pipes - 400 mm diameter** |  | 2027-07-11 | 2027-07-21 |  |  |  |
| RHD4CZ7C02ST1100 |  | Excavation works for GRP Pipe Line 400 mm - (RD-C-2)-Z7-C02-ST | 2d | 2027-07-11 | 2027-07-12 | RHD4ENSDZ7APPST110, RHD4CZ7C02ST1101, RHD4CZ9L05SW3500, RHD4CZ9L05PT3200 |  | -185d |
| RHD4CZ7C02ST1200 |  | Bedding works for GRP Pipe Line 400 mm - (RD-C-2)-Z7-C02-ST | 2d | 2027-07-13 | 2027-07-14 | RHD4CZ7C02ST1100, RHD4CZ4L014PT3100, RHD4CZ4A013ICT3400 |  | -176d |
| RHD4CZ7C02ST1300 |  | Installing for GRP Pipe Line 400 mm - (RD-C-2)-Z7-C02-ST | 2d | 2027-07-15 | 2027-07-17 | RHD4PRSHLSTAGST1006, RHD4CZ7C02ST1200, RHD4CZ7C02ST1301, RHD4PRSHLDOSST1606, RHD4PRSHLPOST1000, RHD4PRSHLDOSST1006, RHD4PRSHLDOSST1605, RHD4PRSHLDOSST1005 |  | -176d |
| RHD4CZ7C02ST1400 |  | Primary Test for GRP Pipe Line 400 mm - (RD-C-2)-Z7-C02-ST | 2d | 2027-07-18 | 2027-07-19 | RHD4CZ7C02ST1300, RHD4CZ7C02ST1401 |  | -176d |
| RHD4CZ7C02ST1500 |  | Backfilling and warning tape works for GRP Pipe Line 400 mm - (RD-C-2)-Z7-C02-ST | 2d | 2027-07-20 | 2027-07-21 | RHD4CZ7C02ST1400, RHD4CZ7C02ST1501 |  | -176d |
|  | 6021 | **RHD4-02-002-C02-(ST)-UPVC Pipes - 400 mm diameter** |  |  |  |  |  |  |
|  | 6020 | **RHD4-02-002-C02-(ST)-UPVC Pipes - 300 mm diameter** |  | 2026-08-25 | 2027-08-04 |  |  |  |
| RHD4CZ7C02ST2100 |  | Excavation works for UPVC Pipe Line 300 mm - (RD-C-2)-Z7-C02-ST | 2d | 2026-08-25 A | 2027-07-18 | RHD4ENSDZ7APPST110, RHD4CZ7C02ST1100 | 5% | -185d |
| RHD4CZ7C02ST2200 |  | Bedding works for UPVC Pipe Line 300 mm - (RD-C-2)-Z7-C02-ST | 2d | 2026-08-29 A | 2027-07-22 | RHD4CZ7C02ST2100 | 6% | -185d |
| RHD4CZ7C02ST2300 |  | Installing for UPVC Pipe Line 300 mm - (RD-C-2)-Z7-C02-ST | 2d | 2026-09-02 A | 2027-07-28 | RHD4PRSHLDOSST1106, RHD4PRSHLSTAGST1106, RHD4CZ7C02ST2200 | 4% | -185d |
| RHD4CZ7C02ST2500 |  | Backfilling and warning tape works for UPVC Pipe Line 300 mm - (RD-C-2)-Z7-C02-ST | 2d | 2026-09-19 A | 2027-08-04 | RHD4CZ7C02ST2400, RHD4CZ7C02ST6100 | 4% | -185d |
| RHD4CZ7C02ST2400 |  | Primary Test for UPVC Pipe Line 300 mm - (RD-C-2)-Z7-C02-ST | 3d | 2027-07-29 | 2027-08-01 | RHD4CZ7C02ST2300 |  | -185d |
|  | 6028 | **RHD4-02-002-C02-(ST)-Concrete Encasement** |  | 2027-07-27 | 2027-07-28 |  |  |  |
| RHD4CZ7C02ST6100 |  | Pipe Encasement for Storm Pipelines - (RD-C-2)-Z7-C02-ST | 2d | 2027-07-27 | 2027-07-28 | RHD4CZ7C02ST2300 SS, RHD4CZ7C02ST2300 FF, RHD4CZ7C02ST2200 |  | -182d |
|  | 6029 | **RHD4-02-002-Z7-C02-Catch Basin - ST** |  | 2026-09-19 | 2027-10-11 |  |  |  |
|  | 6030 | **RHD4-02-002-C02-(ST)-Single Catch Basin Works** |  | 2026-09-19 | 2027-10-09 |  |  |  |
| RHD4CZ7C02ST7100 |  | Excavation works for Single Catch Basin - (RD-C-2)-Z7-C02-ST | 5d | 2026-09-19 A | 2027-08-16 | RHD4ENSDZ7APPST110, RHD4CZ2L102LV3400, RHD4CZ7C02ST3300, RHD4CZ7C02ST3301 | 5% | -187.02d |
| RHD4CZ7C02ST7200 |  | PC Blinding, Installation and Pipe connection for Single Catch Basin - (RD-C-2)-Z7-C02-ST | 5d | 2026-09-21 A | 2027-08-22 | RHD4CZ7C02ST7100 | 5% | -159.02d |
| RHD4CZ7C02ST7300 |  | Rings & C.Slab & Final Backfill for Single Catch Basin - (RD-C-2)-Z7-C02-ST | 6d | 2026-09-22 A | 2027-08-29 | RHD4PRSHLDOSST1306, RHD4PRSHLSTAGST1306, RHD4CZ7C02ST7200 | 5% | -159.02d |
| RHD4CZ7C02ST7400 |  | Steel Cover for Single Catch Basin - (RD-C-2)-Z7-C02-ST | 5d | 2027-09-22 | 2027-09-28 | RHD4PRSHLDOSST1706, RHD4CZ7C02ST7300, RHD4CZ7C02PT3202 |  | -180d |
| RHD4CZ7C02ST7500 |  | Finishing and Insulation works for Single Catch Basin - (RD-C-2)-Z7-C02-ST | 9d | 2027-09-29 | 2027-10-09 | RHD4CZ7C02ST7400 |  | -180d |
|  | 6031 | **RHD4-02-002-C02-(ST)-Double Catch Basin Works** |  | 2027-08-10 | 2027-10-11 |  |  |  |
| RHD4CZ7C02ST8100 |  | Excavation works for Double Catch Basin - (RD-C-2)-Z7-C02-ST | 2d | 2027-08-10 | 2027-08-12 | RHD4ENSDZ7APPST110, RHD4CZ7C02ST7100 SS, RHD4CZ7C02ST3300, RHD4CZ7C02ST3301 |  | -187.02d |
| RHD4CZ7C02ST8200 |  | PC Blinding, Installation and Pipe connection for Double Catch Basin - (RD-C-2)-Z7-C02-ST | 2d | 2027-08-22 | 2027-08-24 | RHD4CZ7C02ST8100, RHD4CZ7C02ST7200 |  | -145.02d |
| RHD4CZ7C02ST8300 |  | Rings & C.Slab & Final Backfillfor Double Catch Basin - (RD-C-2)-Z7-C02-ST | 2d | 2027-08-29 | 2027-08-31 | RHD4PRSHLDOSST1306, RHD4PRSHLSTAGST1306, RHD4CZ7C02ST8200, RHD4CZ7C02ST7300 |  | -149.02d |
| RHD4CZ7C02ST8400 |  | Steel Cover for Double Catch Basin - (RD-C-2)-Z7-C02-ST | 2d | 2027-09-29 | 2027-09-30 | RHD4PRSHLDOSST1706, RHD4CZ7C02ST8300, RHD4CZ7C02ST7400 |  | -173d |
| RHD4CZ7C02ST8500 |  | Finishing and Insulation works for Double Catch Basin - (RD-C-2)-Z7-C02-ST | 2d | 2027-10-10 | 2027-10-11 | RHD4CZ7C02ST8400, RHD4CZ7C02ST7500 |  | -180d |
|  | 3973 | **RHD4-02-002-Z7-C02-Sewage Network - SW** |  | 2026-09-15 | 2027-08-18 |  |  |  |
|  | 3785 | **RHD4-02-002-C02-(SW)-GRP Pipes - 300 mm diameter** |  | 2026-09-15 | 2027-08-15 |  |  |  |
| RHD4CZ7C02SW1100 |  | Excavation works for GRP Pipe Line 300 mm - (RD-C-2)-Z7-C02-SW | 2d | 2026-09-15 A | 2027-08-05 | RHD4CZ7C02ST2500 | 42% | -185d |
| RHD4CZ7C02SW1200 |  | Bedding works for GRP Pipe Line 300 mm - (RD-C-2)-Z7-C02-SW | 2d | 2027-08-07 | 2027-08-08 | RHD4CZ7C02SW1100 |  | -185d |
| RHD4CZ7C02SW1300 |  | Installing for GRP Pipe Line 300 mm - (RD-C-2)-Z7-C02-SW | 2d | 2027-08-09 | 2027-08-10 | RHD4CZ7C02SW1200 |  | -185d |
| RHD4CZ7C02SW1400 |  | Primary Test for GRP Pipe Line 300 mm - (RD-C-2)-Z7-C02-SW | 2d | 2027-08-11 | 2027-08-12 | RHD4CZ7C02SW1300 |  | -185d |
| RHD4CZ7C02SW1500 |  | Backfilling and warning tape works for GRP Pipe Line 300 mm - (RD-C-2)-Z7-C02-SW | 2d | 2027-08-14 | 2027-08-15 | RHD4CZ7C02SW1400 |  | -185d |
|  | 3794 | **RHD4-02-002-C02-(SW)-MH Works - 1200 mm diameter** |  | 2026-09-20 | 2027-08-18 |  |  |  |
| RHD4CZ7C02SW3100 |  | Excavation and PC Blinding works for MH 1200 mm - (RD-C-2)-Z7-C02-SW | 2d | 2026-09-20 A | 2026-10-20 A | RHD4CZ7C02SW1100 | 100% |  |
| RHD4CZ7C02SW3200 |  | Installation of Base for MH 1200 mm - (RD-C-2)-Z7-C02-SW | 3d | 2027-08-07 | 2027-08-09 | RHD4CZ7C02SW3100 |  | -180d |
| RHD4CZ7C02SW3300 |  | MH Ring and C.Slab works and Backfilling works for MH 1200 mm - (RD-C-2)-Z7-C02-SW | 3d | 2027-08-10 | 2027-08-12 | RHD4CZ7C02SW3200 |  | -180d |
| RHD4CZ7C02SW3400 |  | Steel Cover for MH 1200 mm - (RD-C-2)-Z7-C02-SW | 2d | 2027-08-14 | 2027-08-15 | RHD4CZ7C02SW3300 |  | -180d |
| RHD4CZ7C02SW3500 |  | Finishing, Benching, Testing works for MH 1200 mm - (RD-C-2)-Z7-C02-SW | 3d | 2027-08-16 | 2027-08-18 | RHD4CZ7C02SW3400, RHD4CZ7C02ST1508 |  | -180d |
|  | 4299 | **RHD4-02-002-Z7-C02-Concrete Box Culvert - ST** |  | 2026-06-11 | 2026-12-09 |  |  |  |
|  | 4300 | **RHD4-02-002-C02-(ST)-Concrete Box Culvert** |  | 2026-06-11 | 2026-12-09 |  |  |  |
| RHD4CZ7C02ST4100 |  | Excavation works for Box Culvert - (RD-C-2)-Z7-C02-ST(Completed) | 46d | 2026-06-11 A | 2026-07-07 A | RHD4ENMARAPPTU100 | 100% |  |
| RHD4CZ7C02ST4200 |  | PC works for Box Culvert - (RD-C-2)-Z7-C02-ST(Completed) | 43d | 2026-06-15 A | 2026-06-18 A | RHD4CZ7C02ST4100 SS | 100% |  |
| RHD4CZ7C02ST4400 |  | Raft works for Box Culvert - (RD-C-2)-Z7-C02-ST(Completed) | 21d | 2026-07-11 A | 2026-07-16 A | RHD4CZ7C02ST4200 SS | 100% |  |
| RHD4CZ7C02ST4500 |  | Wall and slab works for Box Culvert - (RD-C-2)-Z7-C02-ST | 6d | 2026-08-04 A | 2026-11-10 | RHD4CZ7C02ST4400, RHD4CZ7C02ST4200, RHD4ENMARAPPTU100, RHD4CZ7C02ST4100 | 55% | -174d |
| RHD4CZ7C02ST4600 |  | Insulation and Testing for Box Culvert - (RD-C-2)-Z7-C02-ST | 5d | 2026-10-03 A | 2026-10-07 A | RHD4CZ7C02ST4700, RHD4CZ7C02ST5400 | 100% |  |
| RHD4CZ7C02ST4700 |  | Backfilling works for Box Culvert - (RD-C-2)-Z7-C02-ST | 19d | 2026-11-18 | 2026-12-09 | RHD4CZ7C02ST4500, RHD4CZ7C02ST5300 |  | -174d |
|  | 4301 | **RHD4-02-002-C02-(ST)-Concrete Chambers** |  | 2026-10-01 | 2026-11-19 |  |  |  |
| RHD4CZ7C02ST5100 |  | Excavation and Bedding for Concrete Chambers - for Box Culvert - (RD-C-2)-Z7-C02-ST | 2d | 2026-10-01 A | 2026-11-12 | RHD4CZ7C02ST4500 |  | -174d |
| RHD4CZ7C02ST5200 |  | PC works for Concrete Chambers - for Box Culvert - (RD-C-2)-Z7-C02-ST | 2d | 2026-10-04 A | 2026-11-15 | RHD4CZ7C02ST5100 |  | -174d |
| RHD4CZ7C02ST5300 |  | Installation for Concrete Chambers - for Box Culvert - (RD-C-2)-Z7-C02-ST | 2d | 2026-10-06 A | 2026-11-17 | RHD4CZ7C02ST5200 |  | -174d |
| RHD4CZ7C02ST5400 |  | Backfilling works for Concrete Chambers - for Box Culvert - (RD-C-2)-Z7-C02-ST | 2d | 2026-11-18 | 2026-11-19 | RHD4CZ7C02ST5300 |  | -157d |
|  | 6091 | **RHD4-02-002-Z7-C02-Potable Network - PT** |  | 2027-08-16 | 2027-09-29 |  |  |  |
|  | 6093 | **RHD4-02-002-C02-(PT)-HDPE Pipes - 160 mm diameter** |  | 2027-08-16 | 2027-09-09 |  |  |  |
| RHD4CZ7C02PT1101 |  | Excavation works for HDPE Pipline 160 mm - (RD-C-2)-Z7-C02-PT | 4d | 2027-08-16 | 2027-08-19 | RHD4ENSDZ7APPPT130, RHD4ENMSPT2000, RHD4CZ7C02SW1100, RHD4CZ7C02SW1500 |  | -185d |
| RHD4CZ7C02PT1201 |  | Bedding works for HDPE Pipline 160 mm - (RD-C-2)-Z7-C02-PT | 4d | 2027-08-21 | 2027-08-24 | RHD4CZ7C02PT1101 |  | -185d |
| RHD4CZ7C02PT1301 |  | Installing for HDPE Pipline 160 mm - (RD-C-2)-Z7-C02-PT | 6d | 2027-08-25 | 2027-08-31 | RHD4PRSHLDOSPT1000, RHD4PRSHLSTAGPT1000, RHD4CZ7C02PT1201, RHD4CZ6C062IRR3203 FF, RHD4CZ6RA01CCTV1500 FF, RHD4CZ9L02IRR3203 |  | -185d |
| RHD4CZ7C02PT1401 |  | Primary Test for HDPE Pipline 160 mm - (RD-C-2)-Z7-C02-PT | 3d | 2027-09-01 | 2027-09-04 | RHD4CZ7C02PT1301, RHD4CZ8C014IRR3200 |  | -185d |
| RHD4CZ7C02PT1501 |  | Backfilling and warning tape works for HDPE Pipline 160 mm - (RD-C-2)-Z7-C02-PT | 5d | 2027-09-05 | 2027-09-09 | RHD4CZ7C02PT1401, RHD4CZ8C014IRR3202, RHD4CZ8C014IRR1501, RHD4CZ4C031CCTV6100, RHD4CZ5C061TC2400, RHD4CZ3L122IRR3202, RHD4CZ9C071PT3200, RHD4CZ7L131PT3203 |  | -185d |
|  | 4969 | **RHD4-02-002-C02-(PT)-Fire Hydrant** |  | 2027-09-11 | 2027-09-22 |  |  |  |
| RHD4CZ7C02PT4100 |  | Excavation and Bedding and Pipe Installation for Fire Hydrant - (RD-C-2)-Z7-C02-PT | 3d | 2027-09-11 | 2027-09-13 | RHD4CZ7C02PT1501 |  | -177d |
| RHD4CZ7C02PT4200 |  | Valve Installation for Fire Hydrant - (RD-C-2)-Z7-C02-PT | 2d | 2027-09-14 | 2027-09-15 | RHD4CZ7C02PT4100 |  | -177d |
| RHD4CZ7C02PT4300 |  | Stem for Fire Hydrant - (RD-C-2)-Z7-C02-PT | 2d | 2027-09-16 | 2027-09-18 | RHD4CZ7C02PT4200 |  | -177d |
| RHD4CZ7C02PT4400 |  | Fire Installation for Fire Hydrant - (RD-C-2)-Z7-C02-PT | 2d | 2027-09-19 | 2027-09-20 | RHD4CZ7C02PT4300 |  | -177d |
| RHD4CZ7C02PT4500 |  | Protection Barriers for Fire Hydrant - (RD-C-2)-Z7-C02-PT | 2d | 2027-09-21 | 2027-09-22 | RHD4CZ7C02PT4400 |  | -177d |

| ID | WBS | Task | Duration | Start | Finish | Predecessors | Total float |
| --- | --- | --- | --- | --- | --- | --- | --- |
|  | 6100 | **RHD4-02-002-C02-(PT)-Wash out Valve Chambers** |  | 2027-09-11 | 2027-09-19 |  |  |
| RHD4CZ7C02PT2101 |  | Excavation and Bedding for Wash out Valve Chambers for Potable Water Network - (RD-C-2)-Z7-C02-PT | 2d | 2027-09-11 | 2027-09-12 | RHD4ENSDZ7APPPT130, RHD4CZ7C02PT1501 | -185d |
| RHD4CZ7C02PT2201 |  | PC works for Wash out Valve Chambers for Potable Water Network - (RD-C-2)-Z7-C02-PT | 2d | 2027-09-13 | 2027-09-14 | RHD4CZ7C02PT2101 | -185d |
| RHD4CZ7C02PT2301 |  | Installation for Wash out Valve Chambers for Potable Water Network - (RD-C-2)-Z7-C02-PT | 2d | 2027-09-15 | 2027-09-16 | RHD4PRSHLDOSPT1100, RHD4PRSHLDOSPT1400, RHD4PRSHLSTAGPT1100, RHD4PRSHLSTAGPT1400, RHD4CZ7C02PT2201 | -185d |
| RHD4CZ7C02PT2401 |  | Backfilling works for Wash out Valve Chambers for Potable Water Network - (RD-C-2)-Z7-C02-PT | 2d | 2027-09-18 | 2027-09-19 | RHD4CZ7C02PT2301 | -185d |
|  | 6101 | **RHD4-02-002-C02-(PT)-Wash out Valves** |  | 2027-09-18 | 2027-09-21 |  |  |
| RHD4CZ7C02PT3102 |  | Installation for Wash out Valves for Potable Water Network - (RD-C-2)-Z7-C02-PT | 2d | 2027-09-18 | 2027-09-19 | RHD4PRSHLDOSPT1200, RHD4PRSHLSTAGPT1200, RHD4CZ7C02PT2301 | -185d |
| RHD4CZ7C02PT3202 |  | Stem and Service box for Wash out Valves for Potable Water Network - (RD-C-2)-Z7-C02-PT | 2d | 2027-09-20 | 2027-09-21 | RHD4PRSHLDOSPT1300, RHD4PRSHLSTAGPT1300, RHD4CZ7C02PT3102, RHD4CZ7C02PT2401 | -185d |
|  | 6102 | **RHD4-02-002-C02-(PT)-Air Valve Chambers** |  | 2027-09-11 | 2027-09-19 |  |  |
| RHD4CZ7C02PT2102 |  | Excavation and Bedding for Air Valve Chambers for Potable Water Network - (RD-C-2)-Z7-C02-PT | 2d | 2027-09-11 | 2027-09-12 | RHD4ENSDZ7APPPT130, RHD4CZ7C02PT1501, RHD4CZ7L015ST3501, RHD4CZ3C011LV4300 | -182d |
| RHD4CZ7C02PT2202 |  | PC works for Air Valve Chambers for Potable Water Network - (RD-C-2)-Z7-C02-PT | 2d | 2027-09-13 | 2027-09-14 | RHD4CZ7C02PT2102 | -182d |
| RHD4CZ7C02PT2302 |  | Installation for Air Valve Chambers for Potable Water Network - (RD-C-2)-Z7-C02-PT | 2d | 2027-09-15 | 2027-09-16 | RHD4PRSHLDOSPT1100, RHD4PRSHLDOSPT1400, RHD4PRSHLSTAGPT1100, RHD4PRSHLSTAGPT1400, RHD4CZ7C02PT2202, RHD4CZ9L02IRR3200 | -182d |
| RHD4CZ7C02PT2402 |  | Backfilling works for Air Valve Chambers for Potable Water Network - (RD-C-2)-Z7-C02-PT | 2d | 2027-09-18 | 2027-09-19 | RHD4CZ7C02PT2302, RHD4CZ7A012IRR1503, RHD4CZ7C032IRR3202 | -182d |
|  | 6103 | **RHD4-02-002-C02-(PT)-Air Valves** |  | 2027-09-18 | 2027-09-21 |  |  |
| RHD4CZ7C02PT3103 |  | Installation for Air Valves for Potable Water Network - (RD-C-2)-Z7-C02-PT | 2d | 2027-09-18 | 2027-09-19 | RHD4PRSHLDOSPT1200, RHD4PRSHLSTAGPT1200, RHD4CZ7C02PT2302 | -182d |
| RHD4CZ7C02PT3203 |  | Stem and Service box for Air Valves for Potable Water Network - (RD-C-2)-Z7-C02-PT | 2d | 2027-09-20 | 2027-09-21 | RHD4PRSHLDOSPT1300, RHD4PRSHLSTAGPT1300, RHD4CZ7C02PT3103, RHD4CZ7C02PT2402, RHD4CZ9C071IRR1500 FF, RHD4CZ9C071IRR1507, RHD4CZ9L06IRR1500, RHD4CZ7A012SW3500, RHD4CZ9C071IRR3201, RHD4CZ4C031RD8100, RHD4CZ7L131SW3500 | -182d |
|  | 6105 | **RHD4-02-002-C02-(PT)-Concrete Encasement** |  |  |  |  |  |
|  | 6097 | **RHD4-02-002-C02-(PT)-Gate Valves (Direct Buried)** |  | 2027-09-22 | 2027-09-29 |  |  |
| RHD4CZ7C02PT3100 |  | Installation for Direct Buried Gate Valves - (RD-C-2)-Z7-C02-PT | 3d | 2027-09-22 | 2027-09-26 | RHD4PRSHLDOSPT1200, RHD4PRSHLSTAGPT1200, RHD4CZ7C02PT3203, RHD4CZ4C031RD7100 | -182d |
| RHD4CZ7C02PT3200 |  | Stem and Service box for Direct Buried Gate Valves - (RD-C-2)-Z7-C02-PT | 3d | 2027-09-27 | 2027-09-29 | RHD4PRSHLDOSPT1300, RHD4PRSHLSTAGPT1300, RHD4CZ7C02PT3100, RHD4CZ7C02PT1501, RHD4CZ2C082RD8100, RHD4CZ4RA02RD7100, RHD4CZ7C032IRR3203, RHD4CZ4L01SL5200, RHD4CZ7C013ICT2400, RHD4CZ8A011LV5200 | -182d |
|  | 6106 | **RHD4-02-002-Z7-C02-Irrigation Network - IRR** |  | 2027-09-30 | 2027-10-23 |  |  |
|  | 6107 | **RHD4-02-002-C02-(IRR)-HDPE Pipes - 160 mm diameter** |  | 2027-10-06 | 2027-10-17 |  |  |
| RHD4CZ7C02IRR1100 |  | Excavation works for HDPE Pipline 160 mm - (RD-C-2)-Z7-C02-IRR | 2d | 2027-10-06 | 2027-10-07 | RHD4ENSDZ7APPIRR140, RHD4ENMSRR2000, RHD4CZ7C02IRR1104 | -179d |
| RHD4CZ7C02IRR1200 |  | Bedding works for HDPE Pipline 160 mm - (RD-C-2)-Z7-C02-IRR | 2d | 2027-10-09 | 2027-10-10 | RHD4CZ7C02IRR1100 | -151d |
| RHD4CZ7C02IRR1300 |  | Installing for HDPE Pipline 160 mm - (RD-C-2)-Z7-C02-IRR | 2d | 2027-10-11 | 2027-10-12 | RHD4PRSHLDOSIRR1000, RHD4PRSHLSTAGIRR1000, RHD4CZ7C02IRR1200 | -151d |
| RHD4CZ7C02IRR1400 |  | Primary Test for HDPE Pipline 160 mm - (RD-C-2)-Z7-C02-IRR | 2d | 2027-10-13 | 2027-10-14 | RHD4CZ7C02IRR1300 | -151d |
| RHD4CZ7C02IRR1500 |  | Backfilling and warning tape works for HDPE Pipline 160 mm - (RD-C-2)-Z7-C02-IRR | 2d | 2027-10-16 | 2027-10-17 | RHD4CZ7C02IRR1400 | -151d |
|  | 6111 | **RHD4-02-002-C02-(IRR)-HDPE Pipes - 315 mm diameter** |  | 2027-09-30 | 2027-10-23 |  |  |
| RHD4CZ7C02IRR1104 |  | Excavation works for HDPE Pipline 315 mm - (RD-C-2)-Z7-C02-IRR | 5d | 2027-09-30 | 2027-10-05 | RHD4ENSDZ7APPIRR140, RHD4ENMSRR2000, RHD4CZ7C02PT1101, RHD4CZ7C02PT3200 | -179d |
| RHD4CZ7C02IRR1204 |  | Bedding works for HDPE Pipline 315 mm - (RD-C-2)-Z7-C02-IRR | 4d | 2027-10-06 | 2027-10-10 | RHD4CZ7C02IRR1104 | -154d |
| RHD4CZ7C02IRR1304 |  | Installing for HDPE Pipline 315 mm - (RD-C-2)-Z7-C02-IRR | 5d | 2027-10-11 | 2027-10-16 | RHD4PRSHLDOSIRR1000, RHD4PRSHLSTAGIRR1000, RHD4CZ7C02IRR1204 | -154d |
| RHD4CZ7C02IRR1404 |  | Primary Test for HDPE Pipline 315 mm - (RD-C-2)-Z7-C02-IRR | 2d | 2027-10-17 | 2027-10-18 | RHD4CZ7C02IRR1304 | -154d |
| RHD4CZ7C02IRR1504 |  | Backfilling and warning tape works for HDPE Pipline 315 mm - (RD-C-2)-Z7-C02-IRR | 4d | 2027-10-19 | 2027-10-23 | RHD4CZ7C02IRR1404 | -154d |
|  | 6112 | **RHD4-02-002-C02-(IRR)-HDPE Pipes - 400 mm diameter** |  |  |  |  |  |
|  | 6113 | **RHD4-02-002-C02-(IRR)-HDPE Pipes - 450 mm diameter** |  |  |  |  |  |
|  | 6115 | **RHD4-02-002-C02-(IRR)-Gate Valves (Direct Buried)** |  | 2027-10-14 | 2027-10-19 |  |  |
| RHD4CZ7C02IRR3100 |  | Installation for Direct Buried Gate Valves - (RD-C-2)-Z7-C02-IRR | 2d | 2027-10-14 | 2027-10-16 | RHD4PRSHLDOSIRR1100, RHD4PRSHLSTAGIRR1100, RHD4CZ7C02IRR1304 SS, RHD4CZ7C02IRR1304 FF, RHD4CZ7C02IRR1300 SS, RHD4CZ7C02IRR1300 FF | -150d |
| RHD4CZ7C02IRR3200 |  | Stem and Service box for Direct Buried Gate Valves - (RD-C-2)-Z7-C02-IRR | 2d | 2027-10-18 | 2027-10-19 | RHD4PRSHLDOSIRR1300, RHD4PRSHLSTAGIRR1300, RHD4CZ7C02IRR3100, RHD4CZ7C02IRR1500 | -151d |
|  | 6116 | **RHD4-02-002-C02-(IRR)-Butterfly Valve Chamber** |  | 2027-10-09 | 2027-10-18 |  |  |
| RHD4CZ7C02IRR2100 |  | Excavation and Bedding for Butterfly Valve Chamber for Irrigation Network - (RD-C-2)-Z7-C02-IRR | 2d | 2027-10-09 | 2027-10-10 | RHD4ENSDZ7APPIRR140, RHD4CZ7C02IRR1100 | -153d |
| RHD4CZ7C02IRR2200 |  | PC works for Butterfly Valve Chamber for Irrigation Network - (RD-C-2)-Z7-C02-IRR | 2d | 2027-10-11 | 2027-10-12 | RHD4CZ7C02IRR2100 | -153d |
| RHD4CZ7C02IRR2300 |  | Installation for Butterfly Valve Chamber for Irrigation Network - (RD-C-2)-Z7-C02-IRR | 2d | 2027-10-13 | 2027-10-14 | RHD4PRSHLDOSIRR1200, RHD4PRSHLDOSIRR1400, RHD4PRSHLSTAGIRR1200, RHD4PRSHLSTAGIRR1400, RHD4CZ7C02IRR2200 | -153d |
| RHD4CZ7C02IRR2400 |  | Backfilling works for Butterfly Valve Chamber for Irrigation Network - (RD-C-2)-Z7-C02-IRR | 3d | 2027-10-16 | 2027-10-18 | RHD4CZ7C02IRR2300 | -151d |
|  | 6117 | **RHD4-02-002-C02-(IRR)-Butterfly Valves** |  | 2027-10-16 | 2027-10-19 |  |  |
| RHD4CZ7C02IRR3101 |  | Installation for Butterfly Valves for Irrigation Network - (RD-C-2)-Z7-C02-IRR | 2d | 2027-10-16 | 2027-10-17 | RHD4PRSHLDOSIRR1100, RHD4PRSHLSTAGIRR1100, RHD4CZ7C02IRR2300 | -153d |
| RHD4CZ7C02IRR3201 |  | Stem and Service box for Butterfly Valves for Irrigation Network - (RD-C-2)-Z7-C02-IRR | 2d | 2027-10-18 | 2027-10-19 | RHD4PRSHLDOSIRR1300, RHD4PRSHLSTAGIRR1300, RHD4CZ7C02IRR3101, RHD4CZ7C02IRR2400 SS | -153d |
|  | 6686 | **RHD4-02-002-C02-(IRR)-Wash out Valves** |  | 2027-10-16 | 2027-10-19 |  |  |
| RHD4CZ7C02IRR3102 |  | Installation for Wash out Valve for Irrigation Network - (RD-C-2)-Z7-C02-IRR | 2d | 2027-10-16 | 2027-10-17 | RHD4CZ7C02IRR2301 | -179d |
| RHD4CZ7C02IRR3202 |  | Stem and Service box for Wash out Valve for Irrigation Network - (RD-C-2)-Z7-C02-IRR | 2d | 2027-10-18 | 2027-10-19 | RHD4CZ7C02IRR3102, RHD4CZ7C02IRR2401, RHD4CZ7C02SW3500 | -179d |
|  | 6685 | **RHD4-02-002-C02-(IRR)-Wash out Chamber** |  | 2027-10-09 | 2027-10-17 |  |  |
| RHD4CZ7C02IRR2101 |  | Excavation and Bedding for Wash out Chamber for Irrigation Network - (RD-C-2)-Z7-C02-IRR | 2d | 2027-10-09 | 2027-10-10 | RHD4CZ7C02IRR1100 | -179d |
| RHD4CZ7C02IRR2201 |  | PC works for Wash out Chamber for Irrigation Network - (RD-C-2)-Z7-C02-IRR | 2d | 2027-10-11 | 2027-10-12 | RHD4CZ7C02IRR2101 | -179d |
| RHD4CZ7C02IRR2301 |  | Installation for Wash out Chamber for Irrigation Network - (RD-C-2)-Z7-C02-IRR | 2d | 2027-10-13 | 2027-10-14 | RHD4CZ7C02IRR2201 | -179d |
| RHD4CZ7C02IRR2401 |  | Backfilling works for Wash out Chamber for Irrigation Network - (RD-C-2)-Z7-C02-IRR | 2d | 2027-10-16 | 2027-10-17 | RHD4CZ7C02IRR2301 | -179d |
|  | 6140 | **RHD4-02-002-Z7-C02-Medium Voltage Network - MV** |  | 2027-07-06 | 2027-08-31 |  |  |
|  | 6141 | **RHD4-02-002-C02-(MV)-Medium Voltage cable trench** |  | 2027-07-06 | 2027-08-24 |  |  |
| RHD4CZ7C02MV1100 |  | Excavation for Medium Voltage Trench - (RD-C-2)-Z7-C02-MV | 11d | 2027-07-06 | 2027-07-19 | RHD4ENSDZ7APPMV150, RHD4CZ7C02RD3100, RHD4CZ8A011MV1100 | -147.02d |
| RHD4CZ7C02MV1200 |  | Trench Backfilling for Medium Voltage Network - (RD-C-2)-Z7-C02-MV | 11d | 2027-08-11 | 2027-08-24 | RHD4CZ7C02MV3200 | -127.02d |
|  | 6142 | **RHD4-02-002-C02-(MV)-Medium Voltage duct banks** |  | 2027-07-19 | 2027-07-29 |  |  |
| RHD4CZ7C02MV2100 |  | Excavation of Duct Banks for Medium Voltage Network - (RD-C-2)-Z7-C02-MV | 2d | 2027-07-19 | 2027-07-21 | RHD4ENSDZ7APPMV150, RHD4CZ7C02MV1100 | -147.02d |
| RHD4CZ7C02MV2200 |  | Installation of Duct Banks for Medium Voltage Network - (RD-C-2)-Z7-C02-MV | 3d | 2027-07-21 | 2027-07-25 | RHD4PRSHLDOSMV1000, RHD4PRSHLSTAGMV1000, RHD4CZ7C02MV2100 | -127.02d |
| RHD4CZ7C02MV2300 |  | Pouring of Duct Banks for Medium Voltage Network - (RD-C-2)-Z7-C02-MV | 2d | 2027-07-25 | 2027-07-27 | RHD4CZ7C02MV2200 | -127.02d |
| RHD4CZ7C02MV2400 |  | Backfilling of Duct Banks for Medium Voltage Network - (RD-C-2)-Z7-C02-MV | 2d | 2027-07-27 | 2027-07-29 | RHD4CZ7C02MV2300 | -127.02d |
|  | 6143 | **RHD4-02-002-C02-(MV)-Medium Voltage cables 3Cx 500 mm²** |  | 2027-07-19 | 2027-08-31 |  |  |
| RHD4CZ7C02MV3100 |  | Installation of Medium Voltage Cables 3Cx 500 mm² - (RD-C-2)-Z7-C02-MV | 15d | 2027-07-19 | 2027-08-05 | RHD4PRSHLDOSMV1100, RHD4ENMSMV2000, RHD4ENMSMV2010, RHD4PRSHLSTAGMV1100, RHD4CZ7C02MV1100 | -133.02d |
| RHD4CZ7C02MV3200 |  | Joints Installation of Medium Voltage Cables 3Cx 500 mm² - (RD-C-2)-Z7-C02-MV | 5d | 2027-08-05 | 2027-08-11 | RHD4PRSHLDOSMV1300, RHD4PRSHLSTAGMV1300, RHD4CZ7C02MV3100, RHD4CZ7C02MV2400 | -133.02d |
| RHD4CZ7C02MV3300 |  | Testing of Medium Voltage Cables 3Cx 500 mm² - (RD-C-2)-Z7-C02-MV | 15d | 2027-08-11 | 2027-08-29 | RHD4CZ7C02MV3200 | -133.02d |
| RHD4CZ7C02MV3400 |  | Termination of Medium Voltage Cables 3Cx 500 mm² - (RD-C-2)-Z7-C02-MV | 2d | 2027-08-29 | 2027-08-31 | RHD4CZ7C02MV3300 | -133.02d |
|  | 6145 | **RHD4-02-002-C02-(MV)-Normally open Point (Outdoor Type)** |  |  |  |  |  |
|  | 6144 | **RHD4-02-002-C02-(MV)-Medium Voltage cables 3Cx 50 mm²** |  | 2027-08-29 | 2027-08-31 |  |  |

| ID | WBS | Task | Duration | Start | Finish | Predecessors | Total float |
| --- | --- | --- | --- | --- | --- | --- | --- |
| RHD4CZ7C02MV3401 |  | Termination of Medium Voltage Cables 3Cx 50 mm² - (RD-C-2)-Z7-C02-MV | 2d | 2027-08-29 | 2027-08-31 | RHD4CZ7C02MV3400 SS, RHD4CZ7C02MV3300 | -133.02d |
|  | 1795 | **RHD4-02-002-C02-(MV)-Unit Substations** |  |  |  |  |  |
|  | 6147 | **RHD4-02-002-Z7-C02-Low Voltage Network - LV** |  | 2027-07-21 | 2027-09-27 |  |  |
|  | 6148 | **RHD4-02-002-C02-(LV)-Low Voltage duct banks** |  | 2027-07-21 | 2027-08-10 |  |  |
| RHD4CZ7C02LV2100 |  | Excavation of Duct Banks for Low Voltage Network - (RD-C-2)-Z7-C02-LV | 4d | 2027-07-21 | 2027-07-26 | RHD4ENSDZ7APPLV160, RHD4CZ7C02RW3000, RHD4CZ7C02MV2100 | -147.02d |
| RHD4CZ7C02LV2200 |  | Installation of Duct Banks for Low Voltage Network - (RD-C-2)-Z7-C02-LV | 6d | 2027-07-26 | 2027-08-02 | RHD4PRSHLDOSLV1000, RHD4PRSHLSTAGLV1000, RHD4CZ7C02LV2100 | -146.02d |
| RHD4CZ7C02LV2300 |  | Pouring of Duct Banks for Low Voltage Network - (RD-C-2)-Z7-C02-LV | 4d | 2027-08-02 | 2027-08-07 | RHD4CZ7C02LV2200 | -140.02d |
| RHD4CZ7C02LV2400 |  | Backfilling of Duct Banks for Low Voltage Network - (RD-C-2)-Z7-C02-LV | 3d | 2027-08-07 | 2027-08-10 | RHD4CZ7C02LV2300 | -115.02d |
|  | 6149 | **RHD4-02-002-C02-(LV)-Low Voltage Drawpit** |  | 2027-08-31 | 2027-09-05 |  |  |
| RHD4CZ7C02LV5100 |  | Excavation of Drawpit size 900x900x1000mm for Low Voltage Network - (RD-C-2)-Z7-C02-LV | 2d | 2027-08-31 | 2027-09-02 | RHD4ENSDZ7APPLV160, RHD4CZ7C02MV3401, RHD4CZ7C02LV2400, RHD4CZ7C02MV1200 | -133.02d |
| RHD4CZ7C02LV5200 |  | Installation of Drawpit size 900x900x1000mm for Low Voltage Network - (RD-C-2)-Z7-C02-LV | 2d | 2027-09-02 | 2027-09-05 | RHD4PRSHLDOSLV1400, RHD4PRSHLSTAGLV1400, RHD4CZ7C02LV5100 | -133.02d |
|  | 6150 | **RHD4-02-002-C02-(LV)-Low Voltage cables** |  | 2027-09-05 | 2027-09-27 |  |  |
| RHD4CZ7C02LV3100 |  | Excavation for Low Voltage Cables for Low Voltage Network - (RD-C-2)-Z7-C02-LV | 5d | 2027-09-05 | 2027-09-11 | RHD4ENSDZ7APPLV160, RHD4CZ7C02LV5200 | -133.02d |
| RHD4CZ7C02LV3200 |  | Cable Laying of Low Voltage Cables for Low Voltage Network - (RD-C-2)-Z7-C02-LV | 5d | 2027-09-11 | 2027-09-16 | RHD4PRSHLDOSLV1100, RHD4ENMSLV2000, RHD4ENMSLV2010, RHD4PRSHLSTAGLV1100, RHD4CZ7C02LV3100 | -133.02d |
| RHD4CZ7C02LV3300 |  | Warning tape and Backfill for Low Voltage Cables for Low Voltage Network - (RD-C-2)-Z7-C02-LV | 5d | 2027-09-16 | 2027-09-22 | RHD4CZ7C02LV3200 | -133.02d |
| RHD4CZ7C02LV3400 |  | Testing of Low Voltage Cables for Low Voltage Network - (RD-C-2)-Z7-C02-LV | 3d | 2027-09-22 | 2027-09-27 | RHD4CZ7C02LV3300 | -133.02d |
|  | 6153 | **RHD4-02-002-Z7-C02-Street Lighting Network - SL** |  | 2027-07-26 | 2027-12-19 |  |  |
|  | 6154 | **RHD4-02-002-C02-(SL)-Street Lighting duct banks** |  | 2027-07-26 | 2027-08-29 |  |  |
| RHD4CZ7C02SL2100 |  | Excavation of Duct Banks for Street Lighting Network - (RD-C-2)-Z7-C02-SL | 7d | 2027-07-26 | 2027-08-03 | RHD4ENSDZ7APPSL170, RHD4CZ7C02LV2100, RHD4CZ7C02LV2100 FF | -147.02d |
| RHD4CZ7C02SL2200 |  | Installation of Duct Banks for Street Lighting Network - (RD-C-2)-Z7-C02-SL | 10d | 2027-08-03 | 2027-08-15 | RHD4PRSHLDOSSL1000, RHD4PRSHLSTAGSL1000, RHD4CZ7C02SL2100, RHD4CZ7C02LV2200 | -147.02d |
| RHD4CZ7C02SL2300 |  | Pouring of Duct Banks for Street Lighting Network - (RD-C-2)-Z7-C02-SL | 7d | 2027-08-15 | 2027-08-23 | RHD4CZ7C02SL2200, RHD4CZ7C02LV2300 | -147.02d |
| RHD4CZ7C02SL2400 |  | Backfilling of Duct Banks for Street Lighting Network - (RD-C-2)-Z7-C02-SL | 5d | 2027-08-23 | 2027-08-29 | RHD4CZ7C02SL2300 | -147.02d |
|  | 6155 | **RHD4-02-002-C02-(SL)-Street Lighting Drawpit** |  | 2027-10-20 | 2027-10-25 |  |  |
| RHD4CZ7C02SL5100 |  | Excavation of Drawpit size 600x600x900mm for Street Lighting Network - (RD-C-2)-Z7-C02-SL | 2d | 2027-10-20 | 2027-10-21 | RHD4ENSDZ7APPSL170, RHD4CZ7C02SL2300, RHD4CZ7C02LV3400, RHD4CZ7C02IRR3201 | -153d |
| RHD4CZ7C02SL5200 |  | Installation of Drawpit size 600x600x900mm for Street Lighting Network - (RD-C-2)-Z7-C02-SL | 2d | 2027-10-24 | 2027-10-25 | RHD4PRSHLDOSSL1400, RHD4PRSHLSTAGSL1400, RHD4CZ7C02SL5100, RHD4CZ7C02IRR3200, RHD4CZ7C02IRR1504 | -154d |
|  | 6156 | **RHD4-02-002-C02-(SL)-Street Lighting cables** |  | 2027-10-26 | 2027-11-24 |  |  |
| RHD4CZ7C02SL3100 |  | Excavation for Street Lighting Cables for Street Lighting Network - (RD-C-2)-Z7-C02-SL | 8d | 2027-10-26 | 2027-11-03 | RHD4ENSDZ7APPSL170, RHD4CZ7C02SL5200 | -154d |
| RHD4CZ7C02SL3200 |  | Cable Laying of Street Lighting Cables for Street Lighting Network - (RD-C-2)-Z7-C02-SL | 7d | 2027-11-04 | 2027-11-11 | RHD4PRSHLDOSSL1100, RHD4ENMSSL2000, RHD4ENMSSL2010, RHD4PRSHLSTAGSL1100, RHD4CZ7C02SL3100 | -154d |
| RHD4CZ7C02SL3300 |  | Warning tape and Backfill for Street Lighting Cables for Street Lighting Network - (RD-C-2)-Z7-C02-SL | 7d | 2027-11-13 | 2027-11-20 | RHD4CZ7C02SL3200 | -154d |
| RHD4CZ7C02SL3400 |  | Testing of Street Lighting Cables for Street Lighting Network - (RD-C-2)-Z7-C02-SL | 4d | 2027-11-21 | 2027-11-24 | RHD4CZ7C02SL3300 | -154d |
|  | 6157 | **RHD4-02-002-C02-(SL)-Street Lighting Poles** |  | 2027-11-25 | 2027-12-09 |  |  |
| RHD4CZ7C02SL1100 |  | Excavation for RC Base for Lighting Poles for Street Lighting Network - (RD-C-2)-Z7-C02-SL | 2d | 2027-11-25 | 2027-11-27 | RHD4ENSDZ7APPSL170, RHD4CZ7C02SL3400 | -154d |
| RHD4CZ7C02SL1200 |  | Installation for RC Base for Lighting Poles for Street Lighting Network - (RD-C-2)-Z7-C02-SL | 2d | 2027-11-28 | 2027-11-29 | RHD4CZ7C02SL1100 | -154d |
| RHD4CZ7C02SL1300 |  | Backfill for RC Base for Lighting Poles for Street Lighting Network - (RD-C-2)-Z7-C02-SL | 2d | 2027-11-30 | 2027-12-01 | RHD4CZ7C02SL1200 | -154d |
| RHD4CZ7C02SL1400 |  | Installation for Lighting Poles for Street Lighting Network - (RD-C-2)-Z7-C02-SL | 3d | 2027-12-02 | 2027-12-05 | RHD4PRSHLDOSSL1200, RHD4ENMSSL2000, RHD4ENMSSL2010, RHD4PRSHLSTAGSL1200, RHD4CZ7C02SL1300 | -154d |
| RHD4CZ7C02SL1500 |  | Luminaire Installation for Lighting Poles for Street Lighting Network - (RD-C-2)-Z7-C02-SL | 4d | 2027-12-06 | 2027-12-09 | RHD4PRSHLDOSSL1300, RHD4PRSHLSTAGSL1300, RHD4CZ7C02SL1400 | -154d |
|  | 6158 | **RHD4-02-002-C02-(SL)-Street Lighting Feeder Pillars** |  | 2027-12-11 | 2027-12-16 |  |  |
| RHD4CZ7C02SL4100 |  | Leveling for Distribution Pillars for Street Lighting Network - (RD-C-2)-Z7-C02-SL | 2d | 2027-12-11 | 2027-12-12 | RHD4CZ7C02SL3300, RHD4CZ7C02SL1500, RHD4CZ7A012ICT5200 | -149d |
| RHD4CZ7C02SL4200 |  | Lean Concrete for Distribution Pillars for Street Lighting Network - (RD-C-2)-Z7-C02-SL | 2d | 2027-12-13 | 2027-12-14 | RHD4CZ7C02SL4100 | -149d |
| RHD4CZ7C02SL4300 |  | Installation of Distribution Pillars for Street Lighting Network - (RD-C-2)-Z7-C02-SL | 2d | 2027-12-15 | 2027-12-16 | RHD4CZ7C02SL4200, RHD4CZ7C02SL1400, RHD4CZ7A012RD5100 | -149d |
|  | 6159 | **RHD4-02-002-C02-(SL)-Street Lighting Earthing System** |  | 2027-12-18 | 2027-12-19 |  |  |
| RHD4CZ7C02SL6100 |  | Installation of Earthing for Lighting Poles and Fedder Pillers for Street Lighting Network - (RD-C-2)-Z7-C02-SL | 2d | 2027-12-18 | 2027-12-19 | RHD4ENMSER2000, RHD4ENMSER2010, RHD4CZ7C02SL4300 | -149d |
|  | 6165 | **RHD4-02-002-Z7-C02-Telecommunications Network - TC** |  | 2027-02-14 | 2028-01-25 |  |  |
|  | 6166 | **RHD4-02-002-C02-(TC)-Telecommunications Ducts** |  | 2027-12-20 | 2028-01-16 |  |  |
| RHD4CZ7C02TC2100 |  | Excavation of HDPE Ducts for Telecom Network - (RD-C-2)-Z7-C02-TC | 7d | 2027-12-20 | 2027-12-27 | RHD4ENSDZ7APPTC190, RHD4CZ7C02TC3400, RHD4CZ7C02SL6100 | -149d |
| RHD4CZ7C02TC2200 |  | Installation of HDPE Ducts for Telecom Network - (RD-C-2)-Z7-C02-TC | 10d | 2027-12-28 | 2028-01-08 | RHD4PRSHLDOSTC1000, RHD4PRSHLSTAGTC1000, RHD4CZ7C02TC2100 | -149d |
| RHD4CZ7C02TC2400 |  | Backfilling of HDPE Ducts for Telecom Network - (RD-C-2)-Z7-C02-TC | 7d | 2028-01-09 | 2028-01-16 | RHD4CZ7C02TC2200 | -149d |
|  | 6167 | **RHD4-02-002-C02-(TC)-Telecommunications Manholes** |  | 2028-01-17 | 2028-01-25 |  |  |
| RHD4CZ7C02TC5100 |  | Excavation for Manholes for Telecom Network - (RD-C-2)-Z7-C02-TC | 4d | 2028-01-17 | 2028-01-20 | RHD4ENSDZ7APPTC190, RHD4CZ7C02TC2100, RHD4CZ7C02TC2400 | -149d |
| RHD4CZ7C02TC5200 |  | Installation of Manholes for Telecom Network - (RD-C-2)-Z7-C02-TC | 4d | 2028-01-22 | 2028-01-25 | RHD4PRSHLDOSTC1200, RHD4PRSHLSTAGTC1200, RHD4CZ7C02TC5100 | -149d |
|  | 6168 | **RHD4-02-002-C02-(TC)-Telecomminications Road Crossings** |  | 2027-02-14 | 2027-03-03 |  |  |
| RHD4CZ7C02TC3100 |  | Excavation for Road Crossings for Telecom Network - (RD-C-2)-Z7-C02-TC | 3d | 2027-02-14 | 2027-02-17 | RHD4ENSDZ7APPTC190, RHD4CZ7C02ST1109 | -197.02d |
| RHD4CZ7C02TC3200 |  | Installation of Road Crossings for Telecom Network - (RD-C-2)-Z7-C02-TC | 4d | 2027-02-17 | 2027-02-23 | RHD4PRSHLDOSTC1100, RHD4PRSHLSTAGTC1100, RHD4CZ7C02TC3100 | -197.02d |
| RHD4CZ7C02TC3300 |  | Pouring of Road Crossings for Telecom Network - (RD-C-2)-Z7-C02-TC | 4d | 2027-02-23 | 2027-02-28 | RHD4CZ7C02TC3200 | -197.02d |
| RHD4CZ7C02TC3400 |  | Backfilling of Road Crossings for Telecom Network - (RD-C-2)-Z7-C02-TC | 3d | 2027-02-28 | 2027-03-03 | RHD4CZ7C02TC3300 | -197.02d |
|  | 6169 | **RHD4-02-002-Z7-C02-Information and Communication Technologies - ICT** |  | 2027-02-14 | 2028-02-23 |  |  |
|  | 6170 | **RHD4-02-002-C02-(ICT)-Information and Communication Technologies Ducts** |  | 2028-01-26 | 2028-02-23 |  |  |
| RHD4CZ7C02ICT2100 |  | Excavation of HDPE Ducts for ICT Network - (RD-C-2)-Z7-C02-ICT | 7d | 2028-01-26 | 2028-02-02 | RHD4ENSDZ7APPICT200, RHD4CZ7C02ICT3400, RHD4CZ7C02TC5200 | -149d |
| RHD4CZ7C02ICT2200 |  | Installation of HDPE Ducts for ICT Network - (RD-C-2)-Z7-C02-ICT | 10d | 2028-02-03 | 2028-02-14 | RHD4PRSHLDOSICT1000, RHD4PRSHLSTAGICT1000, RHD4CZ7C02ICT2100 | -149d |
| RHD4CZ7C02ICT2400 |  | Backfilling of HDPE Ducts for ICT Network - (RD-C-2)-Z7-C02-ICT | 7d | 2028-02-15 | 2028-02-23 | RHD4CZ7C02ICT2200, RHD4CZ7C02ICT5200 | -149d |
|  | 6171 | **RHD4-02-002-C02-(ICT)-Information and Communication Technologies Manholes** |  | 2028-02-03 | 2028-02-12 |  |  |
| RHD4CZ7C02ICT5100 |  | Excavation for Manholes for ICT Network - (RD-C-2)-Z7-C02-ICT | 4d | 2028-02-03 | 2028-02-07 | RHD4ENSDZ7APPICT200, RHD4CZ7C02ICT2100 | -147d |
| RHD4CZ7C02ICT5200 |  | Installation of Manholes for ICT Network - (RD-C-2)-Z7-C02-ICT | 4d | 2028-02-08 | 2028-02-12 | RHD4PRSHLDOSICT1200, RHD4PRSHLSTAGICT1200, RHD4CZ7C02ICT5100 | -147d |
|  | 6172 | **RHD4-02-002-C02-(ICT)-Information and Communication Technologies Road Crossings** |  | 2027-02-14 | 2027-03-03 |  |  |
| RHD4CZ7C02ICT3100 |  | Excavation for Road Crossings for ICT Network - (RD-C-2)-Z7-C02-ICT | 3d | 2027-02-14 | 2027-02-17 | RHD4ENSDZ7APPICT200, RHD4CZ7C02ST1109 | -197.02d |
| RHD4CZ7C02ICT3200 |  | Installation of Road Crossings for ICT Network - (RD-C-2)-Z7-C02-ICT | 4d | 2027-02-17 | 2027-02-23 | RHD4PRSHLDOSICT1100, RHD4PRSHLSTAGICT1100, RHD4CZ7C02ICT3100 | -197.02d |
| RHD4CZ7C02ICT3300 |  | Pouring of Road Crossings for ICT Network - (RD-C-2)-Z7-C02-ICT | 4d | 2027-02-23 | 2027-02-28 | RHD4CZ7C02ICT3200 | -197.02d |
| RHD4CZ7C02ICT3400 |  | Backfilling of Road Crossings for ICT Network - (RD-C-2)-Z7-C02-ICT | 3d | 2027-02-28 | 2027-03-03 | RHD4CZ7C02ICT3300 | -197.02d |
|  | 6160 | **RHD4-02-002-Z7-C02-Landscape Network - LS** |  |  |  |  |  |
|  | 6161 | **RHD4-02-002-C02-(LS)-Landscape Lighting cables** |  |  |  |  |  |

| ID | WBS | Task | Duration | Start | Finish | Predecessors | Total float |
| --- | --- | --- | --- | --- | --- | --- | --- |
|  | 6163 | **RHD4-02-002-C02-(LS)-Landscape Bollard Poles** |  |  |  |  |  |
|  | 6173 | **RHD4-02-002-Z7-C02-Security Network - CCTV** |  | 2028-02-24 | 2028-04-05 |  |  |
|  | 6174 | **RHD4-02-002-C02-(CCTV)-Civil Works** |  | 2028-02-24 | 2028-03-08 |  |  |
| RHD4CZ7C02CCTV2100 |  | Civil Works for Security Network - (RD-C-2)-Z7-C02-CCTV | 9d | 2028-02-24 | 2028-03-08 | RHD4CZ7C02ICT2400 | -149d |
|  | 6175 | **RHD4-02-002-C02-(CCTV)-CCTV Poles** |  | 2028-03-09 | 2028-03-18 |  |  |
| RHD4CZ7C02CCTV1100 |  | Excavation for RC Base for CCTV Poles for Security Network - (RD-C-2)-Z7-C02-CCTV | 2d | 2028-03-09 | 2028-03-11 | RHD4ENSDZ7APPCCTV210, RHD4CZ7C02CCTV2100 | -149d |
| RHD4CZ7C02CCTV1200 |  | Installation for RC Base for CCTV Poles for Security Network - (RD-C-2)-Z7-C02-CCTV | 2d | 2028-03-12 | 2028-03-13 | RHD4CZ7C02CCTV1100 | -149d |
| RHD4CZ7C02CCTV1300 |  | Backfill for RC Base for CCTV Poles for Security Network - (RD-C-2)-Z7-C02-CCTV | 2d | 2028-03-14 | 2028-03-15 | RHD4CZ7C02CCTV1200 | -149d |
| RHD4CZ7C02CCTV1400 |  | Installation for CCTV Poles for Security Network - (RD-C-2)-Z7-C02-CCTV | 2d | 2028-03-16 | 2028-03-18 | RHD4PRSHLDOSCCTV1000, RHD4PRSHLSTACCTV1000, RHD4CZ7C02CCTV1300 | -149d |
|  | 6176 | **RHD4-02-002-C02-(CCTV)-Camera** |  | 2028-03-19 | 2028-03-20 |  |  |
| RHD4CZ7C02CCTV3100 |  | Installation for Cameras for Security Network - (RD-C-2)-Z7-C02-CCTV | 2d | 2028-03-19 | 2028-03-20 | RHD4PRSHLDOSCCTV1100, RHD4PRSHLSTACCTV1100, RHD4CZ7C02CCTV1400 | -149d |
|  | 6177 | **RHD4-02-002-C02-(CCTV)-Power and Infrastructure** |  | 2028-04-02 | 2028-04-05 |  |  |
| RHD4CZ7C02CCTV4100 |  | Installation of Power outlet, UPS and midspan for PTZ Camerafor Cameras for Security Network - (RD-C-2)-Z7-C02-CCTV | 2d | 2028-04-02 | 2028-04-03 | RHD4PRSHLDOSCCTV1300, RHD4PRSHLSTACCTV1300, RHD4CZ7C02CCTV1400, RHD4CZ7C02CCTV6100 | -149d |
| RHD4CZ7C02CCTV4200 |  | Short Range Wireless PoP wireless Bridgefor CCTV Poles for Security Network - (RD-C-2)-Z7-C02-CCTV | 2d | 2028-04-04 | 2028-04-05 | RHD4CZ7C02CCTV4100, RHD4CZ7C02CCTV4100 FF | -149d |
|  | 6179 | **RHD4-02-002-C02-(CCTV)-CCTV Panels and Components** |  | 2028-03-21 | 2028-04-01 |  |  |
| RHD4CZ7C02CCTV6100 |  | Installation for CCTV Panels for Security Network - (RD-C-2)-Z7-C02-CCTV | 10d | 2028-03-21 | 2028-04-01 | RHD4PRSHLDOSCCTV1200, RHD4PRSHLSTACCTV1200, RHD4PRLOLSTACCTV1001, RHD4CZ7C02CCTV3100 | -149d |
|  | 5623 | **RHD4-02-002-Z7-RA03** |  | 2027-02-02 | 2028-03-28 |  |  |
|  | 5802 | **RHD4-02-002-Z7-RA03-Road Works - RD** |  | 2027-03-03 | 2028-03-28 |  |  |
|  | 5803 | **RHD4-02-002-RA03-(RD)-Subgrade** |  | 2027-03-03 | 2027-03-14 |  |  |
| RHD4CZ7RA03RD1100 |  | Supply, lay and compaction subgrade compacted thickness 300 mm for Roads - (ROUND-03)-Z7-RA03-RD | 6d | 2027-03-03 | 2027-03-14 | RHD4ENSDZ7APPEW100, RHD4ENSDZ7APPRD220, RHD4CZ7C02RD1100 SS, RHD4CZ7RA03TC3400 | -172.02d |
|  | 5804 | **RHD4-02-002-RA03-(RD)-Aggregate Base Course** |  | 2027-03-14 | 2027-03-20 |  |  |
| RHD4CZ7RA03RD2100 |  | Supply, lay and compaction Aggregate base course compacted thickness 300 mmfor Roads - (ROUND-03)-Z7-RA03-RD | 5d | 2027-03-14 | 2027-03-20 | RHD4PRSHLDOSRD1000, RHD4PRSHLSTAGRD1000, RHD4CZ7RA03RD1100 | 8.98d |
|  | 5805 | **RHD4-02-002-RA03-(RD)-Bituminous base course Two Layers, including (MC1)&(RC2)** |  | 2027-03-20 | 2028-01-25 |  |  |
| RHD4CZ7RA03RD3100 |  | Supply, lay and Asphaltic base course including Prime Coat (MC1) for 1st Layer - (ROUND-03)-Z7-RA03-RD | 3d | 2027-03-20 | 2027-03-23 | RHD4PRSHLDOSRD1100, RHD4ENMSASPH2000, RHD4ENMSASPH2010, RHD4PRSHLSTAGRD1100, RHD4CZ7RA03RD2100 | 8.98d |
| RHD4CZ7RA03RD3200 |  | Supply, lay and Asphaltic base course including Tack Coat (RC2) for 2nd Layer - (ROUND-03)-Z7-RA03-RD | 3d | 2028-01-22 | 2028-01-25 | RHD4PRSHLDOSRD1100, RHD4PRSHLSTAGRD1100, RHD4CZ7RA03CCTV6100 | -99.02d |
|  | 5807 | **RHD4-02-002-RA03-(RD)-Precast Concrete Curb** |  | 2028-01-25 | 2028-01-31 |  |  |
| RHD4CZ7RA03RD5100 |  | Supply and installation Precast Concrete Kerb for Roads - (ROUND-03)-Z7-RA03-RD | 5d | 2028-01-25 | 2028-01-31 | RHD4PRSHLDOSRD1200, RHD4ENMSRD2000, RHD4ENMSRD2010, RHD4PRSHLSTAGRD1200, RHD4CZ7RA03RD3200 | -99.02d |
|  | 5810 | **RHD4-02-002-RA03-(RD)-Traffic Signage** |  | 2028-01-31 | 2028-02-12 |  |  |
| RHD4CZ7RA03RD8100 |  | Installation of Traffic Signage for Road Network - (ROUND-03)-Z7-RA03-RD | 10d | 2028-01-31 | 2028-02-12 | RHD4PRSHLDOSRD1600, RHD4PRSHLSTAGRD1600, RHD4CZ7RA03RD5100 | -99.02d |
|  | 5808 | **RHD4-02-002-RA03-(RD)-Precast Interlocking Block Pavers** |  |  |  |  |  |
|  | 5806 | **RHD4-02-002-RA03-(RD)-Bituminous concrete wearing course including tack coat (RC2)** |  | 2028-02-12 | 2028-02-14 |  |  |
| RHD4CZ7RA03RD4100 |  | Supply, lay and compaction Asphaltic wearing course including tack Coat (RC2)for Road Network - (ROUND-03)-Z7-RA03-RD | 2d | 2028-02-12 | 2028-02-14 | RHD4CZ7RA03RD5100, RHD4CZ7RA03RD8100 | -99.02d |
|  | 5811 | **RHD4-02-002-RA03-(RD)-Speed Table and Wheel Stopper** |  | 2028-02-14 | 2028-03-04 |  |  |
| RHD4CZ7RA03RD9100 |  | Installation for Speed Bump for Road Network - (ROUND-03)-Z7-RA03-RD | 12d | 2028-02-14 | 2028-03-04 | RHD4CZ7RA03RD4100 | -99.02d |
|  | 5809 | **RHD4-02-002-RA03-(RD)-Pavement Marking** |  | 2028-03-22 | 2028-03-28 |  |  |
| RHD4CZ7RA03RD7100 |  | Pavement Markings for Road Network - (ROUND-03)-Z7-RA03-RD | 5d | 2028-03-22 | 2028-03-28 | RHD4PRSHLDOSRD1500, RHD4PRSHLSTAGRD1500, RHD4CZ7RA03RD9100, RHD4CZ5A014RD7100 | -115.02d |
|  | 5627 | **RHD4-02-002-Z7-RA03-Storm Network - ST** |  |  |  |  |  |
|  | 5646 | **RHD4-02-002-RA03-(ST)-MH Works - 2000 mm diameter** |  |  |  |  |  |
|  | 5645 | **RHD4-02-002-RA03-(ST)-MH Works - 1500 mm diameter** |  |  |  |  |  |
|  | 5644 | **RHD4-02-002-RA03-(ST)-MH Works - 1200 mm diameter** |  |  |  |  |  |
|  | 5635 | **RHD4-02-002-RA03-(ST)-GRP Pipes - 1100 mm diameter** |  |  |  |  |  |
|  | 5633 | **RHD4-02-002-RA03-(ST)-GRP Pipes - 900 mm diameter** |  |  |  |  |  |
|  | 5632 | **RHD4-02-002-RA03-(ST)-GRP Pipes - 800 mm diameter** |  |  |  |  |  |
|  | 5629 | **RHD4-02-002-RA03-(ST)-GRP Pipes - 500 mm diameter** |  |  |  |  |  |
|  | 5643 | **RHD4-02-002-RA03-(ST)-UPVC Pipes - 400 mm diameter** |  |  |  |  |  |
|  | 5642 | **RHD4-02-002-RA03-(ST)-UPVC Pipes - 300 mm diameter** |  |  |  |  |  |
|  | 5650 | **RHD4-02-002-RA03-(ST)-Concrete Encasement** |  |  |  |  |  |
|  | 5651 | **RHD4-02-002-Z7-RA03-Catch Basin - ST** |  |  |  |  |  |
|  | 5652 | **RHD4-02-002-RA03-(ST)-Single Catch Basin Works** |  |  |  |  |  |
|  | 5653 | **RHD4-02-002-RA03-(ST)-Double Catch Basin Works** |  |  |  |  |  |
|  | 5762 | **RHD4-02-002-Z7-RA03-Medium Voltage Network - MV** |  | 2027-03-23 | 2027-05-03 |  |  |
|  | 5765 | **RHD4-02-002-RA03-(MV)-Medium Voltage cables 3Cx 500 mm²** |  |  |  |  |  |
|  | 1979 | **RHD4-02-002-RA03-(MV)-Medium Voltage cable trench** |  |  |  |  |  |
|  | 5766 | **RHD4-02-002-RA03-(MV)-Medium Voltage cables 3Cx 50 mm²** |  | 2027-03-23 | 2027-03-28 |  |  |
| RHD4CZ7RA03MV3101 |  | Installation of Medium Voltage Cables 3Cx 50 mm² - (ROUND-03)-Z7-RA03-MV | 2d | 2027-03-23 | 2027-03-25 | RHD4PRSHLDOSMV1200, RHD4ENMSMV2000, RHD4ENMSMV2010, RHD4PRSHLSTAGMV1200, RHD4CZ7RA03RD3100 | 8.98d |
| RHD4CZ7RA03MV3301 |  | Testing of Medium Voltage Cables 3Cx 50 mm² - (ROUND-03)-Z7-RA03-MV | 2d | 2027-03-25 | 2027-03-28 | RHD4CZ7RA03MV3101 | 8.98d |
|  | 5768 | **RHD4-02-002-RA03-(MV)-Unit Substations** |  | 2027-03-28 | 2027-05-03 |  |  |
| RHD4CZ7RA03MV5100 |  | Excavation for Unit Substations for Medium Voltage Network - (ROUND-03)-Z7-RA03-MV | 2d | 2027-03-28 | 2027-03-30 | RHD4ENSDZ7APPMV150, RHD4CZ7RA03MV3301 | 8.98d |
| RHD4CZ7RA03MV5200 |  | Concrete Base Placement for Unit Substations for Medium Voltage Network - (ROUND-03)-Z7-RA03-MV | 2d | 2027-03-30 | 2027-04-01 | RHD4CZ7RA03MV5100 | 8.98d |
| RHD4CZ7RA03MV5300 |  | Installation for Fences and doors for Medium Voltage Network - (ROUND-03)-Z7-RA03-MV | 5d | 2027-04-01 | 2027-04-07 | RHD4CZ7RA03MV5200 | 8.98d |
| RHD4CZ7RA03MV5400 |  | Installation for Unit Substations for Medium Voltage Network - (ROUND-03)-Z7-RA03-MV | 4d | 2027-04-29 | 2027-05-03 | RHD4PRLOLSTAGMV1601, RHD4PRLOLSTAGMV1602, RHD4CZ7RA03MV5300 | -10d |
|  | 5769 | **RHD4-02-002-Z7-RA03-Low Voltage Network - LV** |  | 2027-11-29 | 2027-12-15 |  |  |
|  | 5770 | **RHD4-02-002-RA03-(LV)-Low Voltage duct banks** |  |  |  |  |  |
|  | 5771 | **RHD4-02-002-RA03-(LV)-Low Voltage Drawpit** |  |  |  |  |  |
|  | 5772 | **RHD4-02-002-RA03-(LV)-Low Voltage cables** |  | 2027-11-29 | 2027-12-08 |  |  |
| RHD4CZ7RA03LV3100 |  | Excavation for Low Voltage Cables for Low Voltage Network - (ROUND-03)-Z7-RA03-LV | 2d | 2027-11-29 | 2027-12-01 | RHD4ENSDZ7APPLV160, RHD4CZ7RA03MV5400, RHD4CZ7L015SL5100 | -184.02d |
| RHD4CZ7RA03LV3200 |  | Cable Laying of Low Voltage Cables for Low Voltage Network - (ROUND-03)-Z7-RA03-LV | 2d | 2027-12-01 | 2027-12-04 | RHD4PRSHLDOSLV1100, RHD4ENMSLV2000, RHD4ENMSLV2010, RHD4PRSHLSTAGLV1100, RHD4CZ7RA03LV3100 | -184.02d |
| RHD4CZ7RA03LV3300 |  | Warning tape and Backfill for Low Voltage Cables for Low Voltage Network - (ROUND-03)-Z7-RA03-LV | 2d | 2027-12-04 | 2027-12-06 | RHD4CZ7RA03LV3200 | -184.02d |
| RHD4CZ7RA03LV3400 |  | Testing of Low Voltage Cables for Low Voltage Network - (ROUND-03)-Z7-RA03-LV | 2d | 2027-12-06 | 2027-12-08 | RHD4CZ7RA03LV3300 | -184.02d |
|  | 5773 | **RHD4-02-002-RA03-(LV)-Low Voltage Distribution Pillars** |  | 2027-12-08 | 2027-12-15 |  |  |

| ID | WBS | Task | Duration | Start | Finish | Predecessors | Total float |
| --- | --- | --- | --- | --- | --- | --- | --- |
| RHD4CZ7RA03LV4100 |  | Leveling for Distribution Pillars for Low Voltage Network - (ROUND-03)-Z7-RA03-LV | 2d | 2027-12-08 | 2027-12-11 | RHD4CZ7RA03LV3400 | -184.02d |
| RHD4CZ7RA03LV4200 |  | Lean Concrete for Distribution Pillars for Low Voltage Network - (ROUND-03)-Z7-RA03-LV | 2d | 2027-12-11 | 2027-12-13 | RHD4CZ7RA03LV4100 | -184.02d |
| RHD4CZ7RA03LV4300 |  | Installation of Distribution Pillars for Low Voltage Network - (ROUND-03)-Z7-RA03-LV | 2d | 2027-12-13 | 2027-12-15 | RHD4PRSHLDOSLV1200, RHD4PRSHLDOSLV1300, RHD4PRSHLSTAGLV1200, RHD4PRSHLSTAGLV1300, RHD4CZ7RA03LV4200 | -184.02d |
|  | 5774 | **RHD4-02-002-RA03-(LV)-Low Voltage Distribution Pillars Earthing** |  |  |  |  |  |
|  | 5775 | **RHD4-02-002-Z7-RA03-Street Lighting Network - SL** |  | 2027-08-29 | 2027-10-23 |  |  |
|  | 5776 | **RHD4-02-002-RA03-(SL)-Street Lighting duct banks** |  | 2027-08-29 | 2027-09-16 |  |  |
| RHD4CZ7RA03SL2100 |  | Excavation of Duct Banks for Street Lighting Network - (ROUND-03)-Z7-RA03-SL | 4d | 2027-08-29 | 2027-09-02 | RHD4ENSDZ7APPSL170, RHD4CZ7RA03RA3000, RHD4CZ7C02SL2400 | -147.02d |
| RHD4CZ7RA03SL2200 |  | Installation of Duct Banks for Street Lighting Network - (ROUND-03)-Z7-RA03-SL | 5d | 2027-09-02 | 2027-09-08 | RHD4PRSHLDOSSL1000, RHD4PRSHLSTAGSL1000, RHD4CZ7RA03SL2100 | -147.02d |
| RHD4CZ7RA03SL2300 |  | Pouring of Duct Banks for Street Lighting Network - (ROUND-03)-Z7-RA03-SL | 4d | 2027-09-08 | 2027-09-13 | RHD4CZ7RA03SL2200 | -147.02d |
| RHD4CZ7RA03SL2400 |  | Backfilling of Duct Banks for Street Lighting Network - (ROUND-03)-Z7-RA03-SL | 3d | 2027-09-13 | 2027-09-16 | RHD4CZ7RA03SL2300 | -147.02d |
|  | 5777 | **RHD4-02-002-RA03-(SL)-Street Lighting Drawpit** |  | 2027-09-16 | 2027-09-21 |  |  |
| RHD4CZ7RA03SL5100 |  | Excavation of Drawpit size 600x600x900mm for Street Lighting Network - (ROUND-03)-Z7-RA03-SL | 2d | 2027-09-16 | 2027-09-19 | RHD4ENSDZ7APPSL170, RHD4CZ7RA03SL2400 | -147.02d |
| RHD4CZ7RA03SL5200 |  | Installation of Drawpit size 600x600x900mm for Street Lighting Network - (ROUND-03)-Z7-RA03-SL | 2d | 2027-09-19 | 2027-09-21 | RHD4PRSHLDOSSL1400, RHD4PRSHLSTAGSL1400, RHD4CZ7RA03SL5100 | -147.02d |
|  | 5778 | **RHD4-02-002-RA03-(SL)-Street Lighting cables** |  | 2027-09-21 | 2027-10-02 |  |  |
| RHD4CZ7RA03SL3100 |  | Excavation for Street Lighting Cables for Street Lighting Network - (ROUND-03)-Z7-RA03-SL | 2d | 2027-09-21 | 2027-09-25 | RHD4ENSDZ7APPSL170, RHD4CZ7RA03SL5200 | -147.02d |
| RHD4CZ7RA03SL3200 |  | Cable Laying of Street Lighting Cables for Street Lighting Network - (ROUND-03)-Z7-RA03-SL | 2d | 2027-09-25 | 2027-09-27 | RHD4PRSHLDOSSL1100, RHD4ENMSSL2000, RHD4ENMSSL2010, RHD4PRSHLSTAGSL1100, RHD4CZ7RA03SL3100 | -147.02d |
| RHD4CZ7RA03SL3300 |  | Warning tape and Backfill for Street Lighting Cables for Street Lighting Network - (ROUND-03)-Z7-RA03-SL | 2d | 2027-09-27 | 2027-09-29 | RHD4CZ7RA03SL3200 | -147.02d |
| RHD4CZ7RA03SL3400 |  | Testing of Street Lighting Cables for Street Lighting Network - (ROUND-03)-Z7-RA03-SL | 2d | 2027-09-29 | 2027-10-02 | RHD4CZ7RA03SL3300 | -147.02d |
|  | 5779 | **RHD4-02-002-RA03-(SL)-Street Lighting Poles** |  | 2027-10-02 | 2027-10-13 |  |  |
| RHD4CZ7RA03SL1100 |  | Excavation for RC Base for Lighting Poles for Street Lighting Network - (ROUND-03)-Z7-RA03-SL | 2d | 2027-10-02 | 2027-10-04 | RHD4ENSDZ7APPSL170, RHD4CZ7RA03SL3400 | -147.02d |
| RHD4CZ7RA03SL1200 |  | Installation for RC Base for Lighting Poles for Street Lighting Network - (ROUND-03)-Z7-RA03-SL | 2d | 2027-10-04 | 2027-10-06 | RHD4CZ7RA03SL1100 | -147.02d |
| RHD4CZ7RA03SL1300 |  | Backfill for RC Base for Lighting Poles for Street Lighting Network - (ROUND-03)-Z7-RA03-SL | 2d | 2027-10-06 | 2027-10-09 | RHD4CZ7RA03SL1200 | -147.02d |
| RHD4CZ7RA03SL1400 |  | Installation for Lighting Poles for Street Lighting Network - (ROUND-03)-Z7-RA03-SL | 2d | 2027-10-09 | 2027-10-11 | RHD4PRSHLDOSSL1200, RHD4ENMSSL2000, RHD4ENMSSL2010, RHD4PRSHLSTAGSL1200, RHD4CZ7RA03SL1300 | -147.02d |
| RHD4CZ7RA03SL1500 |  | Luminaire Installation for Lighting Poles for Street Lighting Network - (ROUND-03)-Z7-RA03-SL | 2d | 2027-10-11 | 2027-10-13 | RHD4PRSHLDOSSL1300, RHD4PRSHLSTAGSL1300, RHD4CZ7RA03SL1400 | -147.02d |
|  | 5780 | **RHD4-02-002-RA03-(SL)-Street Lighting Feeder Pillars** |  | 2027-10-13 | 2027-10-20 |  |  |
| RHD4CZ7RA03SL4100 |  | Leveling for Distribution Pillars for Street Lighting Network - (ROUND-03)-Z7-RA03-SL | 2d | 2027-10-13 | 2027-10-16 | RHD4CZ7RA03SL1500 | -147.02d |
| RHD4CZ7RA03SL4200 |  | Lean Concrete for Distribution Pillars for Street Lighting Network - (ROUND-03)-Z7-RA03-SL | 2d | 2027-10-16 | 2027-10-18 | RHD4CZ7RA03SL4100 | -147.02d |
| RHD4CZ7RA03SL4300 |  | Installation of Distribution Pillars for Street Lighting Network - (ROUND-03)-Z7-RA03-SL | 2d | 2027-10-18 | 2027-10-20 | RHD4CZ7RA03SL4200 | -147.02d |
|  | 5781 | **RHD4-02-002-RA03-(SL)-Street Lighting Earthing System** |  | 2027-10-20 | 2027-10-23 |  |  |
| RHD4CZ7RA03SL6100 |  | Installation of Earthing for Lighting Poles and Fedder Pillers for Street Lighting Network - (ROUND-03)-Z7-RA03-SL | 2d | 2027-10-20 | 2027-10-23 | RHD4ENMSER2000, RHD4ENMSER2010, RHD4CZ7RA03SL4300 | -147.02d |
|  | 489 | **RHD4-02-002-Z7-RA03-Telecommunications Network - TC** |  | 2027-02-02 | 2027-11-08 |  |  |
|  | 490 | **RHD4-02-002-C081-(TC)-Telecommunications Ducts** |  | 2027-10-23 | 2027-11-08 |  |  |
| RHD4CZ7RA03TC2100 |  | Excavation of HDPE Ducts for Telecom Network - (ROUND-03)-Z7-RA03-TC | 3d | 2027-10-23 | 2027-10-26 | RHD4CZ7RA03SL6100 | -147.02d |
| RHD4CZ7RA03TC2200 |  | Installation of HDPE Ducts for Telecom Network - (ROUND-03)-Z7-RA03-TC | 5d | 2027-10-26 | 2027-11-01 | RHD4CZ7RA03TC2100 | -144.03d |
| RHD4CZ7RA03TC2400 |  | Backfilling of HDPE Ducts for Telecom Network - (ROUND-03)-Z7-RA03-TC | 3d | 2027-11-04 | 2027-11-08 | RHD4CZ7RA03TC2200, RHD4CZ7RA03TC5200 | -147.02d |
|  | 491 | **RHD4-02-002-C081-(TC)-Telecommunications Manholes** |  | 2027-10-26 | 2027-11-04 |  |  |
| RHD4CZ7RA03TC5100 |  | Excavation for Manholes for Telecom Network - (ROUND-03)-Z7-RA03-TC | 4d | 2027-10-26 | 2027-10-31 | RHD4CZ7RA03TC2100, RHD4CZ7RA03TC2100 FF | -147.02d |
| RHD4CZ7RA03TC5200 |  | Installation of Manholes for Telecom Network - (ROUND-03)-Z7-RA03-TC | 4d | 2027-10-31 | 2027-11-04 | RHD4CZ7RA03TC5100, RHD4CZ7RA03TC2200 SS | -147.02d |
|  | 5411 | **RHD4-02-002-C081-(TC)-Telecomminications Road Crossings** |  | 2027-02-02 | 2027-02-11 |  |  |
| RHD4CZ7RA03TC3100 |  | Excavation for Road Crossings for Telecom Network - (ROUND-03)-Z7-RA03-TC | 2d | 2027-02-02 | 2027-02-03 | RHD4PRSHLDOSTC1200 | -156.02d |
| RHD4CZ7RA03TC3200 |  | Installation of Road Crossings for Telecom Network - (ROUND-03)-Z7-RA03-TC | 2.01d | 2027-02-04 | 2027-02-07 | RHD4CZ7RA03TC3100 | -156.02d |
| RHD4CZ7RA03TC3300 |  | Pouring of Road Crossings for Telecom Network - (ROUND-03)-Z7-RA03-TC | 2.01d | 2027-02-07 | 2027-02-09 | RHD4CZ7RA03TC3200 | -156.02d |
| RHD4CZ7RA03TC3400 |  | Backfilling of Road Crossings for Telecom Network - (ROUND-03)-Z7-RA03-TC | 2d | 2027-02-09 | 2027-02-11 | RHD4CZ7RA03TC3300 | -156.02d |
|  | 5791 | **RHD4-02-002-Z7-RA03-Information and Communication Technologies - ICT** |  | 2027-10-23 | 2027-11-07 |  |  |
|  | 5792 | **RHD4-02-002-RA03-(ICT)-Information and Communication Technologies Ducts** |  | 2027-10-23 | 2027-11-07 |  |  |
| RHD4CZ7RA03ICT2100 |  | Excavation of HDPE Ducts for ICT Network - (ROUND-03)-Z7-RA03-ICT | 4d | 2027-10-23 | 2027-10-27 | RHD4ENSDZ7APPICT200, RHD4CZ7RA03SL6100 | -146.02d |
| RHD4CZ7RA03ICT2200 |  | Installation of HDPE Ducts for ICT Network - (ROUND-03)-Z7-RA03-ICT | 5d | 2027-10-27 | 2027-11-02 | RHD4PRSHLDOSICT1000, RHD4PRSHLSTAGICT1000, RHD4CZ7RA03ICT2100 | -146.02d |
| RHD4CZ7RA03ICT2400 |  | Backfilling of HDPE Ducts for ICT Network - (ROUND-03)-Z7-RA03-ICT | 4d | 2027-11-02 | 2027-11-07 | RHD4CZ7RA03ICT2200 | -146.02d |
|  | 5782 | **RHD4-02-002-Z7-RA03-Landscape Network - LS** |  |  |  |  |  |
|  | 5783 | **RHD4-02-002-RA03-(LS)-Landscape Lighting cables** |  |  |  |  |  |
|  | 5785 | **RHD4-02-002-RA03-(LS)-Landscape Bollard Poles** |  |  |  |  |  |
|  | 5795 | **RHD4-02-002-Z7-RA03-Security Network - CCTV** |  | 2027-11-08 | 2028-01-22 |  |  |
|  | 5796 | **RHD4-02-002-RA03-(CCTV)-Civil Works** |  | 2027-11-08 | 2027-11-20 |  |  |
| RHD4CZ7RA03CCTV2100 |  | Civil Works for Security Network - (ROUND-03)-Z7-RA03-CCTV | 10d | 2027-11-08 | 2027-11-20 | RHD4CZ7RA03ICT2400, RHD4CZ7RA03TC2400 | -147.02d |
|  | 5797 | **RHD4-02-002-RA03-(CCTV)-CCTV Poles** |  | 2027-12-29 | 2028-01-10 |  |  |
| RHD4CZ7RA03CCTV1100 |  | Excavation for RC Base for CCTV Poles for Security Network - (ROUND-03)-Z7-RA03-CCTV | 2d | 2027-12-29 | 2028-01-01 | RHD4ENSDZ7APPCCTV210, RHD4CZ7RA03CCTV2100, RHD4CZ7L131CCTV2100 | -150.02d |
| RHD4CZ7RA03CCTV1200 |  | Installation for RC Base for CCTV Poles for Security Network - (ROUND-03)-Z7-RA03-CCTV | 2d | 2028-01-01 | 2028-01-03 | RHD4CZ7RA03CCTV1100 | -150.02d |
| RHD4CZ7RA03CCTV1300 |  | Backfill for RC Base for CCTV Poles for Security Network - (ROUND-03)-Z7-RA03-CCTV | 2d | 2028-01-03 | 2028-01-05 | RHD4CZ7RA03CCTV1200 | -150.02d |
| RHD4CZ7RA03CCTV1400 |  | Installation for CCTV Poles for Security Network - (ROUND-03)-Z7-RA03-CCTV | 2d | 2028-01-05 | 2028-01-08 | RHD4PRSHLDOSCCTV1000, RHD4PRSHLSTACCTV1000, RHD4CZ7RA03CCTV1300 | -150.02d |
| RHD4CZ7RA03CCTV1500 |  | Protection post Installation for CCTV Poles for Security Network - (ROUND-03)-Z7-RA03-CCTV | 2d | 2028-01-08 | 2028-01-10 | RHD4CZ7RA03CCTV1400 | -150.02d |
|  | 5798 | **RHD4-02-002-RA03-(CCTV)-Camera** |  | 2028-01-10 | 2028-01-12 |  |  |
| RHD4CZ7RA03CCTV3100 |  | Installation for Cameras for Security Network - (ROUND-03)-Z7-RA03-CCTV | 2d | 2028-01-10 | 2028-01-12 | RHD4PRSHLDOSCCTV1100, RHD4PRSHLSTACCTV1100, RHD4CZ7RA03CCTV1400, RHD4CZ7RA03CCTV4100 | -99.02d |
|  | 5799 | **RHD4-02-002-RA03-(CCTV)-Power and Infrastructure** |  | 2028-01-08 | 2028-01-12 |  |  |
| RHD4CZ7RA03CCTV4100 |  | Installation of Power outlet, UPS and midspan for PTZ Camerafor Cameras for Security Network - (ROUND-03)-Z7-RA03-CCTV | 2d | 2028-01-08 | 2028-01-10 | RHD4PRSHLDOSCCTV1300, RHD4PRSHLSTACCTV1300, RHD4CZ7RA03CCTV1400 | -99.02d |
| RHD4CZ7RA03CCTV4200 |  | Short Range Wireless PoP wireless Bridgefor CCTV Poles for Security Network - (ROUND-03)-Z7-RA03-CCTV | 2d | 2028-01-10 | 2028-01-12 | RHD4CZ7RA03CCTV4100 | -99.02d |
|  | 5801 | **RHD4-02-002-RA03-(CCTV)-CCTV Panels and Components** |  | 2028-01-12 | 2028-01-22 |  |  |
| RHD4CZ7RA03CCTV6100 |  | Installation for CCTV Panels for Security Network - (ROUND-03)-Z7-RA03-CCTV | 8d | 2028-01-12 | 2028-01-22 | RHD4PRSHLDOSCCTV1200, RHD4PRSHLSTACCTV1200, RHD4PRLOLSTACCTV1001, RHD4CZ7RA03CCTV4200, RHD4CZ7RA03CCTV3100 | -99.02d |
|  | 5812 | **RHD4-02-002-Z7-RA05** |  | 2027-02-14 | 2027-12-23 |  |  |
|  | 5991 | **RHD4-02-002-Z7-RA05-Road Works - RD** |  | 2027-03-03 | 2027-12-23 |  |  |
|  | 5992 | **RHD4-02-002-RA05-(RD)-Subgrade** |  | 2027-03-03 | 2027-03-13 |  |  |

| ID | WBS | Task | Duration | Start | Finish | Predecessors | Total float |
| --- | --- | --- | --- | --- | --- | --- | --- |
| RHD4CZ7RA05RD1100 |  | Supply, lay and compaction subgrade compacted thickness 300 mm for Roads - (ROUND-05)-Z7-RA05-RD | 5d | 2027-03-03 | 2027-03-13 | RHD4ENSDZ7APPEW100, RHD4ENSDZ7APPRD220, RHD4CZ7RA03RD1100 SS | -172.02d |
|  | 5993 | **RHD4-02-002-RA05-(RD)-Aggregate Base Course** |  | 2027-03-13 | 2027-03-17 |  |  |
| RHD4CZ7RA05RD2100 |  | Supply, lay and compaction Aggregate base course compacted thickness 300 mmfor Roads - (ROUND-05)-Z7-RA05-RD | 4d | 2027-03-13 | 2027-03-17 | RHD4PRSHLDOSRD1000, RHD4PRSHLSTAGRD1000, RHD4CZ7RA05RD1100 | -172.02d |
|  | 5994 | **RHD4-02-002-RA05-(RD)-Bituminous base course Two Layers, including (MC1)&(RC2)** |  | 2027-03-17 | 2027-12-04 |  |  |
| RHD4CZ7RA05RD3100 |  | Supply, lay and Asphaltic base course including Prime Coat (MC1) for 1st Layer - (ROUND-05)-Z7-RA05-RD | 2d | 2027-03-17 | 2027-03-20 | RHD4PRSHLDOSRD1100, RHD4ENMSASPH2000, RHD4ENMSASPH2010, RHD4PRSHLSTAGRD1100, RHD4CZ7RA05RD2100 | -172.02d |
| RHD4CZ7RA05RD3200 |  | Supply, lay and Asphaltic base course including Tack Coat (RC2) for 2nd Layer - (ROUND-05)-Z7-RA05-RD | 2d | 2027-12-01 | 2027-12-04 | RHD4PRSHLDOSRD1100, RHD4PRSHLSTAGRD1100, RHD4CZ7RA05ICT2400, RHD4CZ7L015SL5200 | -155.02d |
|  | 5996 | **RHD4-02-002-RA05-(RD)-Precast Concrete Curb** |  | 2027-12-04 | 2027-12-08 |  |  |
| RHD4CZ7RA05RD5100 |  | Supply and installation Precast Concrete Kerb for Roads - (ROUND-05)-Z7-RA05-RD | 4d | 2027-12-04 | 2027-12-08 | RHD4PRSHLDOSRD1200, RHD4ENMSRD2000, RHD4ENMSRD2010, RHD4PRSHLSTAGRD1200, RHD4CZ7RA05RD3200 | -155.02d |
|  | 5999 | **RHD4-02-002-RA05-(RD)-Traffic Signage** |  | 2027-12-08 | 2027-12-19 |  |  |
| RHD4CZ7RA05RD8100 |  | Installation of Traffic Signage for Road Network - (ROUND-05)-Z7-RA05-RD | 9d | 2027-12-08 | 2027-12-19 | RHD4PRSHLDOSRD1600, RHD4PRSHLSTAGRD1600, RHD4CZ7RA05RD5100, RHD4CZ7RA05ICT2400, RHD4CZ7C02IRR3202 | -155.02d |
|  | 5997 | **RHD4-02-002-RA05-(RD)-Precast Interlocking Block Pavers** |  |  |  |  |  |
|  | 5995 | **RHD4-02-002-RA05-(RD)-Bituminous concrete wearing course including tack coat (RC2)** |  | 2027-12-08 | 2027-12-11 |  |  |
| RHD4CZ7RA05RD4100 |  | Supply, lay and compaction Asphaltic wearing course including tack Coat (RC2)for Road Network - (ROUND-05)-Z7-RA05-RD | 2d | 2027-12-08 | 2027-12-11 | RHD4CZ7RA05RD5100 | -153.02d |
|  | 6000 | **RHD4-02-002-RA05-(RD)-Speed Table and Wheel Stopper** |  | 2027-12-11 | 2027-12-20 |  |  |
| RHD4CZ7RA05RD9100 |  | Installation for Speed Bump for Road Network - (ROUND-05)-Z7-RA05-RD | 8d | 2027-12-11 | 2027-12-20 | RHD4CZ7RA05RD4100 | -153.02d |
|  | 5998 | **RHD4-02-002-RA05-(RD)-Pavement Marking** |  | 2027-12-20 | 2027-12-23 |  |  |
| RHD4CZ7RA05RD7100 |  | Pavement Markings for Road Network - (ROUND-05)-Z7-RA05-RD | 3d | 2027-12-20 | 2027-12-23 | RHD4PRSHLDOSRD1500, RHD4PRSHLSTAGRD1500, RHD4CZ7RA05RD9100 | -153.02d |
|  | 1789 | **RHD4-02-002-Z7-RA05-Medium Voltage Network - MV** |  |  |  |  |  |
|  | 1790 | **RHD4-02-002-RA05-(MV)-Medium Voltage cable trench** |  |  |  |  |  |
|  | 1792 | **RHD4-02-002-RA05-(MV)-Medium Voltage cables 3Cx 500 mm²** |  |  |  |  |  |
|  | 5964 | **RHD4-02-002-Z7-RA05-Street Lighting Network - SL** |  | 2027-02-14 | 2027-04-17 |  |  |
|  | 5965 | **RHD4-02-002-RA05-(SL)-Street Lighting duct banks** |  | 2027-02-14 | 2027-02-24 |  |  |
| RHD4CZ7RA05SL2100 |  | Excavation of Duct Banks for Street Lighting Network - (ROUND-05)-Z7-RA05-SL | 2d | 2027-02-14 | 2027-02-16 | RHD4ENSDZ7APPSL170, RHD4CZ7RA05RA3000, RHD4CZ7C013IRR1104 | -137.03d |
| RHD4CZ7RA05SL2200 |  | Installation of Duct Banks for Street Lighting Network - (ROUND-05)-Z7-RA05-SL | 2d | 2027-02-16 | 2027-02-18 | RHD4PRSHLDOSSL1000, RHD4PRSHLSTAGSL1000, RHD4CZ7RA05SL2100 | -137.03d |
| RHD4CZ7RA05SL2300 |  | Pouring of Duct Banks for Street Lighting Network - (ROUND-05)-Z7-RA05-SL | 2d | 2027-02-18 | 2027-02-21 | RHD4CZ7RA05SL2200 | -137.03d |
| RHD4CZ7RA05SL2400 |  | Backfilling of Duct Banks for Street Lighting Network - (ROUND-05)-Z7-RA05-SL | 2d | 2027-02-21 | 2027-02-24 | RHD4CZ7RA05SL2300 | -127.03d |
|  | 5966 | **RHD4-02-002-RA05-(SL)-Street Lighting Drawpit** |  | 2027-03-20 | 2027-03-24 |  |  |
| RHD4CZ7RA05SL5100 |  | Excavation of Drawpit size 600x600x900mm for Street Lighting Network - (ROUND-05)-Z7-RA05-SL | 2d | 2027-03-20 | 2027-03-22 | RHD4ENSDZ7APPSL170, RHD4CZ7RA05SL2300, RHD4CZ7RA05RD3100 | -156.03d |
| RHD4CZ7RA05SL5200 |  | Installation of Drawpit size 600x600x900mm for Street Lighting Network - (ROUND-05)-Z7-RA05-SL | 2d | 2027-03-22 | 2027-03-24 | RHD4PRSHLDOSSL1400, RHD4PRSHLSTAGSL1400, RHD4CZ7RA05SL5100 | -156.03d |
|  | 5967 | **RHD4-02-002-RA05-(SL)-Street Lighting cables** |  | 2027-03-24 | 2027-04-03 |  |  |
| RHD4CZ7RA05SL3100 |  | Excavation for Street Lighting Cables for Street Lighting Network - (ROUND-05)-Z7-RA05-SL | 2d | 2027-03-24 | 2027-03-27 | RHD4ENSDZ7APPSL170, RHD4CZ7RA05SL5200 | -156.03d |
| RHD4CZ7RA05SL3200 |  | Cable Laying of Street Lighting Cables for Street Lighting Network - (ROUND-05)-Z7-RA05-SL | 2d | 2027-03-27 | 2027-03-29 | RHD4PRSHLDOSSL1100, RHD4ENMSSL2000, RHD4ENMSSL2010, RHD4PRSHLSTAGSL1100, RHD4CZ7RA05SL3100 | -156.03d |
| RHD4CZ7RA05SL3300 |  | Warning tape and Backfill for Street Lighting Cables for Street Lighting Network - (ROUND-05)-Z7-RA05-SL | 2d | 2027-03-29 | 2027-03-31 | RHD4CZ7RA05SL3200 | -156.03d |
| RHD4CZ7RA05SL3400 |  | Testing of Street Lighting Cables for Street Lighting Network - (ROUND-05)-Z7-RA05-SL | 2d | 2027-03-31 | 2027-04-03 | RHD4CZ7RA05SL3300 | -156.03d |
|  | 5968 | **RHD4-02-002-RA05-(SL)-Street Lighting Poles** |  | 2027-04-03 | 2027-04-17 |  |  |
| RHD4CZ7RA05SL1100 |  | Excavation for RC Base for Lighting Poles for Street Lighting Network - (ROUND-05)-Z7-RA05-SL | 2d | 2027-04-03 | 2027-04-05 | RHD4ENSDZ7APPSL170, RHD4CZ7RA05SL2400, RHD4CZ7RA05SL3400 | -156.03d |
| RHD4CZ7RA05SL1200 |  | Installation for RC Base for Lighting Poles for Street Lighting Network - (ROUND-05)-Z7-RA05-SL | 2d | 2027-04-05 | 2027-04-07 | RHD4CZ7RA05SL1100 | -156.03d |
| RHD4CZ7RA05SL1300 |  | Backfill for RC Base for Lighting Poles for Street Lighting Network - (ROUND-05)-Z7-RA05-SL | 2d | 2027-04-07 | 2027-04-10 | RHD4CZ7RA05SL1200 | -156.03d |
| RHD4CZ7RA05SL1400 |  | Installation for Lighting Poles for Street Lighting Network - (ROUND-05)-Z7-RA05-SL | 2d | 2027-04-10 | 2027-04-12 | RHD4PRSHLDOSSL1200, RHD4ENMSSL2000, RHD4ENMSSL2010, RHD4PRSHLSTAGSL1200, RHD4CZ7RA05SL1300, RHD4CZ7RA05SL3400 | -156.03d |
| RHD4CZ7RA05SL1500 |  | Luminaire Installation for Lighting Poles for Street Lighting Network - (ROUND-05)-Z7-RA05-SL | 2d | 2027-04-14 | 2027-04-17 | RHD4PRSHLDOSSL1300, RHD4PRSHLSTAGSL1300, RHD4CZ7RA05SL1400, RHD4CZ7RA05SL6100 | -155.02d |
|  | 5970 | **RHD4-02-002-RA05-(SL)-Street Lighting Earthing System** |  | 2027-04-12 | 2027-04-14 |  |  |
| RHD4CZ7RA05SL6100 |  | Installation of Earthing for Lighting Poles and Fedder Pillers for Street Lighting Network - (ROUND-05)-Z7-RA05-SL | 2d | 2027-04-12 | 2027-04-14 | RHD4ENMSER2000, RHD4ENMSER2010, RHD4CZ7RA05SL1400 | -156.03d |
|  | 489 | **RHD4-02-002-Z1-C081-Telecommunications Network - TC** |  | 2027-04-14 | 2027-05-02 |  |  |
|  | 490 | **RHD4-02-002-C081-(TC)-Telecommunications Ducts** |  | 2027-04-14 | 2027-05-02 |  |  |
| RHD4CZ7RA05TC2100 |  | Excavation of HDPE Ducts for Telecom Network - (RD-C-8 /1)-Z1-C081-TC | 5d | 2027-04-14 | 2027-04-20 | RHD4CZ7RA05SL6100 | -156.03d |
| RHD4CZ7RA05TC2200 |  | Installation of HDPE Ducts for Telecom Network - (RD-C-8 /1)-Z1-C081-TC | 5d | 2027-04-20 | 2027-04-26 | RHD4CZ7RA05TC2100 | -156.03d |
| RHD4CZ7RA05TC2400 |  | Backfilling of HDPE Ducts for Telecom Network - (RD-C-8 /1)-Z1-C081-TC | 5d | 2027-04-26 | 2027-05-02 | RHD4CZ7RA05TC2200 | -156.03d |
|  | 5980 | **RHD4-02-002-Z7-RA05-Information and Communication Technologies - ICT** |  | 2027-04-17 | 2027-05-08 |  |  |
|  | 5981 | **RHD4-02-002-RA05-(ICT)-Information and Communication Technologies Ducts** |  | 2027-04-17 | 2027-05-08 |  |  |
| RHD4CZ7RA05ICT2100 |  | Excavation of HDPE Ducts for ICT Network - (ROUND-05)-Z7-RA05-ICT | 5d | 2027-04-17 | 2027-04-22 | RHD4ENSDZ7APPICT200, RHD4CZ7RA05SL2100, RHD4CZ7RA05SL1500 | -155.02d |
| RHD4CZ7RA05ICT2200 |  | Installation of HDPE Ducts for ICT Network - (ROUND-05)-Z7-RA05-ICT | 7d | 2027-04-22 | 2027-05-01 | RHD4PRSHLDOSICT1000, RHD4PRSHLSTAGICT1000, RHD4CZ7RA05ICT2100 | -155.02d |
| RHD4CZ7RA05ICT2400 |  | Backfilling of HDPE Ducts for ICT Network - (ROUND-05)-Z7-RA05-ICT | 5d | 2027-05-02 | 2027-05-08 | RHD4CZ7RA05ICT2200, RHD4CZ7RA05TC2400 | -156.03d |
|  | 5971 | **RHD4-02-002-Z7-RA05-Landscape Network - LS** |  |  |  |  |  |
|  | 5972 | **RHD4-02-002-RA05-(LS)-Landscape Lighting cables** |  |  |  |  |  |
|  | 5973 | **RHD4-02-002-RA05-(LS)-Landscape Feeder Pillars** |  |  |  |  |  |
|  | 5974 | **RHD4-02-002-RA05-(LS)-Landscape Bollard Poles** |  |  |  |  |  |
|  | 5975 | **RHD4-02-002-RA05-(LS)-Landscape Feeder Pillars Earthing** |  |  |  |  |  |
|  | 5984 | **RHD4-02-002-Z7-RA05-Security Network - CCTV** |  |  |  |  |  |
|  | 5985 | **RHD4-02-002-RA05-(CCTV)-Civil Works** |  |  |  |  |  |
|  | 703 | **RHD4-02-002-Z2** |  | 2026-08-04 | 2028-03-23 |  |  |
|  | 893 | **RHD4-02-002-Z2-L102** |  | 2026-08-04 | 2028-03-19 |  |  |
|  | 924 | **RHD4-02-002-Z2-L102-Crossings Sewage Network - SWCr** |  |  |  |  |  |
|  | 934 | **RHD4-02-002-L102-(SWCr)-MH Works - 1200 mm diameter** |  |  |  |  |  |
|  | 935 | **RHD4-02-002-L102-(SWCr)-MH Works - 1200 mm diameter with Back drop** |  |  |  |  |  |
|  | 930 | **RHD4-02-002-L102-(SWCr)-UPVC Pipes - 200 mm diameter** |  |  |  |  |  |
|  | 968 | **RHD4-02-002-Z2-L102-Crossings Potable Network - PTCr** |  |  |  |  |  |
|  | 970 | **RHD4-02-002-L102-(PTCr)-HDPE Pipes - 160 mm diameter** |  |  |  |  |  |
|  | 969 | **RHD4-02-002-L102-(PTCr)-HDPE Pipes - 110 mm diameter** |  |  |  |  |  |
|  | 974 | **RHD4-02-002-L102-(PTCr)-Gate Valves (Direct Buried)** |  |  |  |  |  |
|  | 1015 | **RHD4-02-002-Z2-L102-Crossings Irrigation Network - IRRC** |  |  |  |  |  |

| ID | WBS | Task | Duration | Start | Finish | Predecessors | Complete | Total float |
| --- | --- | --- | --- | --- | --- | --- | --- | --- |
|  | 1016 | **RHD4-02-002-L102-(IRRC)-HDPE Pipes - 160 mm diameter** |  |  |  |  |  |  |
|  | 1024 | **RHD4-02-002-L102-(IRRC)-Gate Valves (Direct Buried)** |  |  |  |  |  |  |
|  | 1072 | **RHD4-02-002-Z2-L102-Road Works - RD** |  | 2027-01-11 | 2028-03-19 |  |  |  |
|  | 1073 | **RHD4-02-002-L102-(RD)-Subgrade** |  | 2027-01-11 | 2027-01-24 |  |  |  |
| RHD4CZ2L102RD1100 |  | Supply, lay and compaction subgrade compacted thickness 300 mm for Roads - (RD-L-10/2)-Z2-L102-RD | 12d | 2027-01-11 | 2027-01-24 | RHD4ENSDZ2APPEW100, RHD4ENSDZ2APPRD220, RHD4CZ2L102ST1506 |  | -155d |
|  | 1074 | **RHD4-02-002-L102-(RD)-Aggregate Base Course** |  | 2027-01-25 | 2027-02-03 |  |  |  |
| RHD4CZ2L102RD2100 |  | Supply, lay and compaction Aggregate base course compacted thickness 300 mmfor Roads - (RD-L-10/2)-Z2-L102-RD | 9d | 2027-01-25 | 2027-02-03 | RHD4PRSHLDOSRD1000, RHD4PRSHLSTAGRD1000, RHD4CZ2L102RD1100 |  | -155d |
|  | 1075 | **RHD4-02-002-L102-(RD)-Bituminous base course Two Layers, including (MC1)&(RC2)** |  | 2027-03-20 | 2028-02-06 |  |  |  |
| RHD4CZ2L102RD3100 |  | Supply, lay and Asphaltic base course including Prime Coat (MC1) for 1st Layer - (RD-L-10/2)-Z2-L102-RD | 2d | 2027-03-20 | 2027-03-21 | RHD4PRSHLDOSRD1100, RHD4ENMSASPH2000, RHD4ENMSASPH2010, RHD4PRSHLSTAGRD1100, RHD4CZ2L102RD2100, RHD4CZ7C032RD3100, RHD4CZ8L04RD3100 |  | -188d |
| RHD4CZ2L102RD3200 |  | Supply, lay and Asphaltic base course including Tack Coat (RC2) for 2nd Layer - (RD-L-10/2)-Z2-L102-RD | 2d | 2028-02-03 | 2028-02-06 | RHD4PRSHLDOSRD1100, RHD4PRSHLSTAGRD1100, RHD4CZ2L102RD3100, RHD4CZ2L102CCTV6100 |  | -186.02d |
|  | 1077 | **RHD4-02-002-L102-(RD)-Precast Concrete Curb** |  | 2028-02-06 | 2028-02-15 |  |  |  |
| RHD4CZ2L102RD5100 |  | Supply and installation Precast Concrete Kerb for Roads - (RD-L-10/2)-Z2-L102-RD | 8d | 2028-02-06 | 2028-02-15 | RHD4PRSHLDOSRD1200, RHD4ENMSRD2000, RHD4ENMSRD2010, RHD4PRSHLSTAGRD1200, RHD4CZ2L102RD3200 |  | -186.02d |
|  | 1080 | **RHD4-02-002-L102-(RD)-Traffic Signage** |  | 2028-02-15 | 2028-02-23 |  |  |  |
| RHD4CZ2L102RD8100 |  | Installation of Traffic Signage for Road Network - (RD-L-10/2)-Z2-L102-RD | 6d | 2028-02-15 | 2028-02-23 | RHD4PRSHLDOSRD1600, RHD4PRSHLSTAGRD1600, RHD4CZ2L102RD5100, RHD4CZ2L102TC2400, RHD4CZ2L102ICT2400 |  | -186.02d |
|  | 1078 | **RHD4-02-002-L102-(RD)-Precast Interlocking Block Pavers** |  | 2028-02-23 | 2028-03-11 |  |  |  |
| RHD4CZ2L102RD6100 |  | Interlocking block pavers for sidewalk-footpath for Side walks and Parking areas - (RD-L-10/2)-Z2-L102-RD | 11d | 2028-02-23 | 2028-03-11 | RHD4PRSHLDOSRD1300, RHD4PRSHLDOSRD1400, RHD4ENMSRD2000, RHD4ENMSRD2010, RHD4PRSHLSTAGRD1300, RHD4PRSHLSTAGRD1400, RHD4CZ2L102RD8100 |  | -186.02d |
|  | 1076 | **RHD4-02-002-L102-(RD)-Bituminous concrete wearing course including tack coat (RC2)** |  | 2028-03-11 | 2028-03-13 |  |  |  |
| RHD4CZ2L102RD4100 |  | Supply, lay and compaction Asphaltic wearing course including tack Coat (RC2)for Road Network - (RD-L-10/2)-Z2-L102-RD | 2d | 2028-03-11 | 2028-03-13 | RHD4CZ2L102RD5100, RHD4CZ2L102RD6100 |  | -186.02d |
|  | 1079 | **RHD4-02-002-L102-(RD)-Pavement Marking** |  | 2028-03-13 | 2028-03-19 |  |  |  |
| RHD4CZ2L102RD7100 |  | Pavement Markings for Road Network - (RD-L-10/2)-Z2-L102-RD | 5d | 2028-03-13 | 2028-03-19 | RHD4PRSHLDOSRD1500, RHD4PRSHLSTAGRD1500, RHD4CZ2L102RD4100 |  | -186.02d |
|  | 897 | **RHD4-02-002-Z2-L102-Storm Network - ST** |  | 2026-09-15 | 2027-05-13 |  |  |  |
|  | 916 | **RHD4-02-002-L102-(ST)-MH Works - 2000 mm diameter** |  | 2026-10-01 | 2027-01-12 |  |  |  |
| RHD4CZ2L102ST3102 |  | Excavation and PC Blinding works for MH 2000 mm - (RD-L-10/2)-Z2-L102-ST | 2d | 2026-10-01 A | 2026-10-18 A | RHD4ENSDZ2APPST110, RHD4ENMSST2000, RHD4PRSHLDOSST1001 | 100% |  |
| RHD4CZ2L102ST3202 |  | Installation of Base for MH 2000 mm - (RD-L-10/2)-Z2-L102-ST | 3d | 2027-01-02 | 2027-01-04 | RHD4PRSHLSTAGST1601, RHD4CZ2L102ST3102 |  | -137d |
| RHD4CZ2L102ST3302 |  | MH Ring and C.Slab works and Backfilling works for MH 2000 mm - (RD-L-10/2)-Z2-L102-ST | 3d | 2027-01-05 | 2027-01-07 | RHD4PRSHLDOSST1601, RHD4CZ2L102ST3202 |  | -137d |
| RHD4CZ2L102ST3402 |  | Steel Cover for MH 2000 mm - (RD-L-10/2)-Z2-L102-ST | 2d | 2027-01-09 | 2027-01-10 | RHD4PRSHLDOSST1701, RHD4PRSHLSTAGST1701, RHD4CZ2L102ST3302 |  | -137d |
| RHD4CZ2L102ST3502 |  | Finishing, Benching, Testing works for MH 2000 mm - (RD-L-10/2)-Z2-L102-ST | 2d | 2027-01-11 | 2027-01-12 | RHD4CZ2L102ST3402 |  | -137d |
|  | 915 | **RHD4-02-002-L102-(ST)-MH Works - 1500 mm diameter** |  | 2026-10-03 | 2027-05-11 |  |  |  |
| RHD4CZ2L102ST3101 |  | Excavation and PC Blinding works for MH 1500 mm - (RD-L-10/2)-Z2-L102-ST | 4d | 2026-10-03 A | 2026-10-24 A | RHD4ENSDZ2APPST110, RHD4ENMSST2000, RHD4CZ2L102ST3102 | 100% |  |
| RHD4CZ2L102ST3201 |  | Installation of Base for MH 1500 mm - (RD-L-10/2)-Z2-L102-ST | 4d | 2026-10-24 A | 2027-01-09 | RHD4PRSHLSTAGST1601, RHD4CZ2L102ST3101, RHD4CZ2L102ST3202 | 72% | -135d |
| RHD4CZ2L102ST3301 |  | MH Ring and C.Slab works and Backfilling works for MH 1500 mm - (RD-L-10/2)-Z2-L102-ST | 4d | 2027-01-10 | 2027-01-13 | RHD4PRSHLDOSST1601, RHD4CZ2L102ST3201, RHD4CZ2L102ST3302 |  | -135d |
| RHD4CZ2L102ST3401 |  | Steel Cover for MH 1500 mm - (RD-L-10/2)-Z2-L102-ST | 3d | 2027-02-18 | 2027-02-21 | RHD4PRSHLDOSST1701, RHD4PRSHLSTAGST1701, RHD4CZ2L102ST3301, RHD4CZ2L102ST1500, RHD4CZ2L102ST3402 |  | -130d |
| RHD4CZ2L102ST3501 |  | Finishing, Benching, Testing works for MH 1500 mm - (RD-L-10/2)-Z2-L102-ST | 4d | 2027-05-06 | 2027-05-11 | RHD4CZ2L102ST3401, RHD4CZ2L102ST2500, RHD4CZ2L102ST3502 |  | -189.02d |
|  | 914 | **RHD4-02-002-L102-(ST)-MH Works - 1200 mm diameter** |  | 2026-10-17 | 2027-05-13 |  |  |  |
| RHD4CZ2L102ST3100 |  | Excavation and PC Blinding works for MH 1200 mm - (RD-L-10/2)-Z2-L102-ST | 2d | 2026-10-17 A | 2026-10-24 A | RHD4ENSDZ2APPST110, RHD4ENMSST2000, RHD4ENMSST2010, RHD4CZ2L102ST3101 | 100% |  |
| RHD4CZ2L102ST3200 |  | Installation of Base for MH 1200 mm - (RD-L-10/2)-Z2-L102-ST | 2d | 2027-01-10 | 2027-01-11 | RHD4PRSHLSTAGST1601, RHD4CZ2L102ST3100, RHD4CZ2L102ST3201 |  | -133d |
| RHD4CZ2L102ST3300 |  | MH Ring and C.Slab works and Backfilling works for MH 1200 mm - (RD-L-10/2)-Z2-L102-ST | 2d | 2027-01-14 | 2027-01-16 | RHD4PRSHLDOSST1601, RHD4CZ2L102ST3200, RHD4CZ2L102ST3301 |  | -135d |
| RHD4CZ2L102ST3400 |  | Steel Cover for MH 1200 mm - (RD-L-10/2)-Z2-L102-ST | 2d | 2027-05-06 | 2027-05-09 | RHD4PRSHLDOSST1701, RHD4PRSHLSTAGST1701, RHD4CZ2L102ST3300, RHD4CZ2L102ST2500, RHD4CZ2L102ST1500, RHD4CZ2L102ST3401 |  | -187.02d |
| RHD4CZ2L102ST3500 |  | Finishing, Benching, Testing works for MH 1200 mm - (RD-L-10/2)-Z2-L102-ST | 2d | 2027-05-11 | 2027-05-13 | RHD4CZ2L102ST3400, RHD4CZ2L102ST3501 |  | -189.02d |
|  | 906 | **RHD4-02-002-L102-(ST)-GRP Pipes - 1200 mm diameter** |  |  |  |  |  |  |
|  | 905 | **RHD4-02-002-L102-(ST)-GRP Pipes - 1100 mm diameter** |  |  |  |  |  |  |
|  | 904 | **RHD4-02-002-L102-(ST)-GRP Pipes - 1000 mm diameter** |  | 2026-10-01 | 2027-01-10 |  |  |  |
| RHD4CZ2L102ST1106 |  | Excavation works for GRP Pipe Line 1000 mm - (RD-L-10/2)-Z2-L102-ST | 2d | 2026-10-01 A | 2026-10-07 A | RHD4ENSDZ2APPST110, RHD4PRSHLDOSST1301 | 100% |  |
| RHD4CZ2L102ST1206 |  | Bedding works for GRP Pipe Line 1000 mm - (RD-L-10/2)-Z2-L102-ST | 2d | 2026-10-04 A | 2027-01-03 | RHD4CZ2L102ST1106 | 44% | -177d |
| RHD4CZ2L102ST1306 |  | Installing for GRP Pipe Line 1000 mm - (RD-L-10/2)-Z2-L102-ST | 2d | 2026-10-07 A | 2027-01-05 | RHD4PRSHLSTAGST1001 FF, RHD4CZ2L102ST1206, RHD4PRSHLPOST1000, RHD4PRSHLDOSST1001 | 44% | -177d |
| RHD4CZ2L102ST1406 |  | Primary Test for GRP Pipe Line 1000 mm - (RD-L-10/2)-Z2-L102-ST | 2d | 2027-01-06 | 2027-01-07 | RHD4CZ2L102ST1306 |  | -177d |
| RHD4CZ2L102ST1506 |  | Backfilling and warning tape works for GRP Pipe Line 1000 mm - (RD-L-10/2)-Z2-L102-ST | 2d | 2027-01-09 | 2027-01-10 | RHD4CZ2L102ST1406 |  | -177d |
|  | 903 | **RHD4-02-002-L102-(ST)-GRP Pipes - 900 mm diameter** |  | 2026-09-15 | 2027-02-03 |  |  |  |
| RHD4CZ2L102ST1105 |  | Excavation works for GRP Pipe Line 900 mm - (RD-L-10/2)-Z2-L102-ST | 2d | 2026-09-15 A | 2027-01-13 | RHD4ENSDZ2APPST110, RHD4CZ2L102ST1106, RHD4CZ2L102ST1506 | 50% | -177d |
| RHD4CZ2L102ST1205 |  | Bedding works for GRP Pipe Line 900 mm - (RD-L-10/2)-Z2-L102-ST | 2d | 2026-09-19 A | 2027-01-16 | RHD4CZ2L102ST1105 | 50% | -177d |
| RHD4CZ2L102ST1305 |  | Installing for GRP Pipe Line 900 mm - (RD-L-10/2)-Z2-L102-ST | 2d | 2026-10-03 A | 2027-01-30 | RHD4PRSHLSTAGST1001, RHD4CZ2L102ST1205, RHD4CZ2L102ST1306, RHD4PRSHLPOST1000, RHD4PRSHLDOSST1001 | 50% | -177d |
| RHD4CZ2L102ST1405 |  | Primary Test for GRP Pipe Line 900 mm - (RD-L-10/2)-Z2-L102-ST | 2d | 2027-01-31 | 2027-02-01 | RHD4CZ2L102ST1305, RHD4CZ2L102ST1406 |  | -177d |
| RHD4CZ2L102ST1505 |  | Backfilling and warning tape works for GRP Pipe Line 900 mm - (RD-L-10/2)-Z2-L102-ST | 2d | 2027-02-02 | 2027-02-03 | RHD4CZ2L102ST1405, RHD4CZ2L102ST1506 |  | -177d |
|  | 902 | **RHD4-02-002-L102-(ST)-GRP Pipes - 800 mm diameter** |  | 2026-10-19 | 2027-02-15 |  |  |  |
| RHD4CZ2L102ST1104 |  | Excavation works for GRP Pipe Line 800 mm - (RD-L-10/2)-Z2-L102-ST | 2d | 2026-10-19 A | 2027-02-06 | RHD4ENSDZ2APPST110, RHD4CZ2L102ST1105, RHD4CZ2L102ST1505 | 67% | -177d |
| RHD4CZ2L102ST1204 |  | Bedding works for GRP Pipe Line 800 mm - (RD-L-10/2)-Z2-L102-ST | 2d | 2027-02-07 | 2027-02-08 | RHD4CZ2L102ST1104 |  | -177d |
| RHD4CZ2L102ST1304 |  | Installing for GRP Pipe Line 800 mm - (RD-L-10/2)-Z2-L102-ST | 2d | 2027-02-09 | 2027-02-10 | RHD4PRSHLSTAGST1001, RHD4CZ2L102ST1204, RHD4CZ2L102ST1305, RHD4PRSHLPOST1000, RHD4PRSHLDOSST1001 |  | -177d |
| RHD4CZ2L102ST1404 |  | Primary Test for GRP Pipe Line 800 mm - (RD-L-10/2)-Z2-L102-ST | 2d | 2027-02-11 | 2027-02-13 | RHD4CZ2L102ST1304, RHD4CZ2L102ST1405 |  | -177d |
| RHD4CZ2L102ST1504 |  | Backfilling and warning tape works for GRP Pipe Line 800 mm - (RD-L-10/2)-Z2-L102-ST | 2d | 2027-02-14 | 2027-02-15 | RHD4CZ2L102ST1404, RHD4CZ2L102ST1505 |  | -177d |
|  | 901 | **RHD4-02-002-L102-(ST)-GRP Pipes - 700 mm diameter** |  | 2026-09-15 | 2027-02-17 |  |  |  |
| RHD4CZ2L102ST1103 |  | Excavation works for GRP Pipe Line 700 mm - (RD-L-10/2)-Z2-L102-ST | 2d | 2026-09-15 A | 2026-09-19 A | RHD4ENSDZ2APPST110, RHD4CZ2L102ST1104 | 100% |  |
| RHD4CZ2L102ST1203 |  | Bedding works for GRP Pipe Line 700 mm - (RD-L-10/2)-Z2-L102-ST | 2d | 2026-09-21 A | 2026-09-22 A | RHD4CZ2L102ST1103 | 100% |  |
| RHD4CZ2L102ST1303 |  | Installing for GRP Pipe Line 700 mm - (RD-L-10/2)-Z2-L102-ST | 2d | 2026-10-01 A | 2026-10-17 A | RHD4PRSHLSTAGST1001, RHD4CZ2L102ST1203, RHD4CZ2L102ST1304, RHD4PRSHLPOST1000, RHD4PRSHLDOSST1001 | 100% |  |
| RHD4CZ2L102ST1403 |  | Primary Test for GRP Pipe Line 700 mm - (RD-L-10/2)-Z2-L102-ST | 2d | 2027-02-14 | 2027-02-15 | RHD4CZ2L102ST1303, RHD4CZ2L102ST1404 |  | -177d |
| RHD4CZ2L102ST1503 |  | Backfilling and warning tape works for GRP Pipe Line 700 mm - (RD-L-10/2)-Z2-L102-ST | 2d | 2027-02-16 | 2027-02-17 | RHD4CZ2L102ST1403, RHD4CZ2L102ST1504 |  | -177d |
|  | 900 | **RHD4-02-002-L102-(ST)-GRP Pipes - 600 mm diameter** |  | 2026-10-17 | 2027-02-20 |  |  |  |
| RHD4CZ2L102ST1102 |  | Excavation works for GRP Pipe Line 600 mm - (RD-L-10/2)-Z2-L102-ST | 2d | 2026-10-17 A | 2027-02-08 | RHD4ENSDZ2APPST110, RHD4CZ2L102ST1103 | 60% | -175d |
| RHD4CZ2L102ST1202 |  | Bedding works for GRP Pipe Line 600 mm - (RD-L-10/2)-Z2-L102-ST | 2d | 2026-10-19 A | 2027-02-10 | RHD4CZ2L102ST1102 | 60% | -175d |
| RHD4CZ2L102ST1302 |  | Installing for GRP Pipe Line 600 mm - (RD-L-10/2)-Z2-L102-ST | 2d | 2026-10-20 A | 2027-02-13 | RHD4PRSHLSTAGST1001, RHD4CZ2L102ST1202, RHD4CZ2L102ST1303, RHD4PRSHLPOST1000, RHD4PRSHLDOSST1001 | 60% | -175d |
| RHD4CZ2L102ST1402 |  | Primary Test for GRP Pipe Line 600 mm - (RD-L-10/2)-Z2-L102-ST | 2d | 2027-02-16 | 2027-02-17 | RHD4CZ2L102ST1302, RHD4CZ2L102ST1403 |  | -177d |

| ID | WBS | Task | Duration | Start | Finish | Predecessors | Complete | Total float |
| --- | --- | --- | --- | --- | --- | --- | --- | --- |
| RHD4CZ2L102ST1502 |  | Backfilling and warning tape works for GRP Pipe Line 600 mm - (RD-L-10/2)-Z2-L102-ST | 2d | 2027-02-18 | 2027-02-20 | RHD4CZ2L102ST1402, RHD4CZ2L102ST1503 |  | -177d |
|  | 899 | **RHD4-02-002-L102-(ST)-GRP Pipes - 500 mm diameter** |  |  |  |  |  |  |
|  | 898 | **RHD4-02-002-L102-(ST)-GRP Pipes - 400 mm diameter** |  | 2026-09-24 | 2027-02-17 |  |  |  |
| RHD4CZ2L102ST1100 |  | Excavation works for GRP Pipe Line 400 mm - (RD-L-10/2)-Z2-L102-ST | 2d | 2026-09-24 A | 2026-10-21 A | RHD4ENSDZ2APPST110, RHD4CZ2L102ST1102 | 100% |  |
| RHD4CZ2L102ST1200 |  | Bedding works for GRP Pipe Line 400 mm - (RD-L-10/2)-Z2-L102-ST | 2d | 2027-02-09 | 2027-02-10 | RHD4CZ2L102ST1100 |  | -142d |
| RHD4CZ2L102ST1300 |  | Installing for GRP Pipe Line 400 mm - (RD-L-10/2)-Z2-L102-ST | 2d | 2027-02-11 | 2027-02-13 | RHD4PRSHLSTAGST1001 FF, RHD4CZ2L102ST1200, RHD4PRSHLPOST1000, RHD4PRSHLDOSST1001 |  | -142d |
| RHD4CZ2L102ST1400 |  | Primary Test for GRP Pipe Line 400 mm - (RD-L-10/2)-Z2-L102-ST | 2d | 2027-02-14 | 2027-02-15 | RHD4CZ2L102ST1300 |  | -142d |
| RHD4CZ2L102ST1500 |  | Backfilling and warning tape works for GRP Pipe Line 400 mm - (RD-L-10/2)-Z2-L102-ST | 2d | 2027-02-16 | 2027-02-17 | RHD4CZ2L102ST1400 |  | -142d |
|  | 913 | **RHD4-02-002-L102-(ST)-UPVC Pipes - 400 mm diameter** |  |  |  |  |  |  |
|  | 912 | **RHD4-02-002-L102-(ST)-UPVC Pipes - 300 mm diameter** |  | 2026-10-17 | 2027-05-06 |  |  |  |
| RHD4CZ2L102ST2100 |  | Excavation works for UPVC Pipe Line 300 mm - (RD-L-10/2)-Z2-L102-ST | 3d | 2026-10-17 A | 2027-02-21 | RHD4ENSDZ2APPST110, RHD4CZ2L102ST3300, RHD4CZ2L102ST3301, RHD4CZ2L102ST1500 | 64% | -142d |
| RHD4CZ2L102ST2200 |  | Bedding works for UPVC Pipe Line 300 mm - (RD-L-10/2)-Z2-L102-ST | 3d | 2026-10-24 A | 2027-04-26 | RHD4CZ2L102ST2100, RHD4CZ4L01MV3300 | 73% | -189.02d |
| RHD4CZ2L102ST2300 |  | Installing for UPVC Pipe Line 300 mm - (RD-L-10/2)-Z2-L102-ST | 3d | 2026-10-27 A | 2027-04-29 | RHD4PRSHLDOSST1101, RHD4PRSHLSTAGST1101, RHD4CZ2L102ST2200 | 74% | -189.02d |
| RHD4CZ2L102ST2400 |  | Primary Test for UPVC Pipe Line 300 mm - (RD-L-10/2)-Z2-L102-ST | 2d | 2027-04-29 | 2027-05-02 | RHD4CZ2L102ST2300, RHD4CTUN1Z5STG21320, RHD4CZ6C052PT3200, RHD4CZ7C032SL2400 |  | -189.02d |
| RHD4CZ2L102ST2500 |  | Backfilling and warning tape works for UPVC Pipe Line 300 mm - (RD-L-10/2)-Z2-L102-ST | 4d | 2027-05-02 | 2027-05-06 | RHD4CZ2L102ST2400, RHD4CZ2L102ST6100 |  | -189.02d |
|  | 920 | **RHD4-02-002-L102-(ST)-Concrete Encasement** |  | 2027-04-27 | 2027-04-29 |  |  |  |
| RHD4CZ2L102ST6100 |  | Pipe Encasement for Storm Pipelines - (RD-L-10/2)-Z2-L102-ST | 2d | 2027-04-27 | 2027-04-29 | RHD4CZ2L102ST2300 SS, RHD4CZ2L102ST2300 FF, RHD4CZ2L102ST2200 |  | -187.02d |
|  | 921 | **RHD4-02-002-Z2-L102-Catch Basin - ST** |  | 2026-10-24 | 2027-01-27 |  |  |  |
|  | 922 | **RHD4-02-002-L102-(ST)-Single Catch Basin Works** |  | 2026-10-24 | 2027-01-23 |  |  |  |
| RHD4CZ2L102ST7100 |  | Excavation works for Single Catch Basin - (RD-L-10/2)-Z2-L102-ST | 3d | 2026-10-24 A | 2027-01-04 | RHD4ENSDZ2APPST110, RHD4CZ2L102ST3102 | 65% | -133d |
| RHD4CZ2L102ST7200 |  | PC Blinding, Installation and Pipe connection for Single Catch Basin - (RD-L-10/2)-Z2-L102-ST | 3d | 2027-01-05 | 2027-01-07 | RHD4CZ2L102ST7100 |  | -133d |
| RHD4CZ2L102ST7300 |  | Rings & C.Slab & Final Backfill for Single Catch Basin - (RD-L-10/2)-Z2-L102-ST | 4d | 2027-01-09 | 2027-01-12 | RHD4PRSHLDOSST1301, RHD4PRSHLSTAGST1301, RHD4CZ2L102ST7200 |  | -133d |
| RHD4CZ2L102ST7400 |  | Steel Cover for Single Catch Basin - (RD-L-10/2)-Z2-L102-ST | 3d | 2027-01-13 | 2027-01-16 | RHD4PRSHLDOSST1701, RHD4CZ2L102ST7300 |  | -133d |
| RHD4CZ2L102ST7500 |  | Finishing and Insulation works for Single Catch Basin - (RD-L-10/2)-Z2-L102-ST | 6d | 2027-01-17 | 2027-01-23 | RHD4CZ2L102ST7400 |  | -133d |
|  | 923 | **RHD4-02-002-L102-(ST)-Double Catch Basin Works** |  | 2027-01-17 | 2027-01-27 |  |  |  |
| RHD4CZ2L102ST8100 |  | Excavation works for Double Catch Basin - (RD-L-10/2)-Z2-L102-ST | 2d | 2027-01-17 | 2027-01-18 | RHD4ENSDZ2APPST110, RHD4CZ2L102ST3300, RHD4CZ2L102ST3301, RHD4CZ2L102ST7100 |  | -135d |
| RHD4CZ2L102ST8200 |  | PC Blinding, Installation and Pipe connection for Double Catch Basin - (RD-L-10/2)-Z2-L102-ST | 2d | 2027-01-19 | 2027-01-20 | RHD4CZ2L102ST8100, RHD4CZ2L102ST7200 |  | -135d |
| RHD4CZ2L102ST8300 |  | Rings & C.Slab & Final Backfillfor Double Catch Basin - (RD-L-10/2)-Z2-L102-ST | 2d | 2027-01-21 | 2027-01-23 | RHD4PRSHLDOSST1301, RHD4PRSHLSTAGST1301, RHD4CZ2L102ST8200, RHD4CZ2L102ST7300 |  | -135d |
| RHD4CZ2L102ST8400 |  | Steel Cover for Double Catch Basin - (RD-L-10/2)-Z2-L102-ST | 2d | 2027-01-24 | 2027-01-25 | RHD4PRSHLDOSST1701, RHD4CZ2L102ST8300, RHD4CZ2L102ST7400 |  | -135d |
| RHD4CZ2L102ST8500 |  | Finishing and Insulation works for Double Catch Basin - (RD-L-10/2)-Z2-L102-ST | 2d | 2027-01-26 | 2027-01-27 | RHD4CZ2L102ST8400, RHD4CZ2L102ST7500 |  | -135d |
|  | 894 | **RHD4-02-002-Z2-L102-Concrete Box Culvert - ST** |  | 2026-08-04 | 2027-08-25 |  |  |  |
|  | 895 | **RHD4-02-002-L102-(ST)-Concrete Box Culvert** |  | 2026-08-04 | 2027-08-25 |  |  |  |
| RHD4CZ2L102ST4100 |  | Excavation works for Box Culvert - (RD-L-10/2)-Z2-L102-ST | 4d | 2026-08-04 A | 2027-07-26 | RHD4ENSDZ2APPST110, RHD4ENMSBC2000, RHD4ENMSBC2010, RHD4CZ2L102PT1501 | 30% | -186.02d |
| RHD4CZ2L102ST4500 |  | Wall and slab works for Box Culvert - (RD-L-10/2)-Z2-L102-ST | 7d | 2026-08-04 A | 2027-08-14 | RHD4PRSHLDOSST1501, RHD4PRSHLSTAGST1501, RHD4CZ2L102ST4400 | 30% | -186.02d |
| RHD4CZ2L102ST4200 |  | PC works for Box Culvert - (RD-L-10/2)-Z2-L102-ST | 2d | 2026-08-06 A | 2027-07-28 | RHD4CZ2L102ST4100 | 30% | -186.02d |
| RHD4CZ2L102ST4400 |  | Raft works for Box Culvert - (RD-L-10/2)-Z2-L102-ST | 7d | 2026-08-09 A | 2027-08-05 | RHD4PRSHLDOSST1501, RHD4PRSHLSTAGST1501 SS, RHD4CZ2L102ST4200 | 30% | -186.02d |
| RHD4CZ2L102ST4600 |  | Insulation and Testing for Box Culvert - (RD-L-10/2)-Z2-L102-ST | 6d | 2026-11-04 A | 2027-08-25 | RHD4CZ2L102ST4700, RHD4CZ2L102ST5400, RHD4CZ2L102ST5400 FF | 30% | -186.02d |
| RHD4CZ2L102ST4700 |  | Backfilling works for Box Culvert - (RD-L-10/2)-Z2-L102-ST | 4d | 2027-08-14 | 2027-08-18 | RHD4CZ2L102ST4500, RHD4CZ2L102ST5300 |  | -186.02d |
|  | 896 | **RHD4-02-002-L102-(ST)-Concrete Chambers** |  | 2027-07-26 | 2027-08-04 |  |  |  |
| RHD4CZ2L102ST5100 |  | Excavation and Bedding for Concrete Chambers - for Box Culvert - (RD-L-10/2)-Z2-L102-ST | 2d | 2027-07-26 | 2027-07-28 | RHD4ENSDZ2APPST110, RHD4CZ2L102ST4100 |  | -176.02d |
| RHD4CZ2L102ST5200 |  | PC works for Concrete Chambers - for Box Culvert - (RD-L-10/2)-Z2-L102-ST | 2d | 2027-07-28 | 2027-07-31 | RHD4CZ2L102ST5100 |  | -176.02d |
| RHD4CZ2L102ST5300 |  | Installation for Concrete Chambers - for Box Culvert - (RD-L-10/2)-Z2-L102-ST | 2d | 2027-07-31 | 2027-08-02 | RHD4CZ2L102ST5200 |  | -176.02d |
| RHD4CZ2L102ST5400 |  | Backfilling works for Concrete Chambers - for Box Culvert - (RD-L-10/2)-Z2-L102-ST | 2d | 2027-08-02 | 2027-08-04 | RHD4CZ2L102ST5300 |  | -174.02d |
|  | 946 | **RHD4-02-002-Z2-L102-Sewage Network - SW** |  | 2026-10-20 | 2027-06-21 |  |  |  |
|  | 956 | **RHD4-02-002-L102-(SW)-MH Works - 1200 mm diameter** |  | 2026-10-20 | 2027-06-21 |  |  |  |
| RHD4CZ2L102SW3100 |  | Excavation and PC Blinding works for MH 1200 mm - (RD-L-10/2)-Z2-L102-SW | 7d | 2026-10-20 A | 2027-05-10 | RHD4ENSDZ2APPSW120, RHD4CZ2L102ST2500 | 42% | -186.02d |
| RHD4CZ2L102SW3200 |  | Installation of Base for MH 1200 mm - (RD-L-10/2)-Z2-L102-SW | 8d | 2027-05-13 | 2027-05-27 | RHD4CZ2L102SW3100, RHD4CZ2L102ST3500 |  | -189.02d |
| RHD4CZ2L102SW3300 |  | MH Ring and C.Slab works and Backfilling works for MH 1200 mm - (RD-L-10/2)-Z2-L102-SW | 8d | 2027-05-27 | 2027-06-06 | RHD4PRSHLDOSSW1301, RHD4PRSHLSTAGSW1301, RHD4CZ2L102SW3200, RHD4CZ5L07IRR3200, RHD4CZ9C071ST1500 |  | -189.02d |
| RHD4CZ2L102SW3400 |  | Steel Cover for MH 1200 mm - (RD-L-10/2)-Z2-L102-SW | 5d | 2027-06-06 | 2027-06-12 | RHD4PRSHLDOSSW1401, RHD4PRSHLSTAGSW1401, RHD4CZ2L102SW3300 |  | -189.02d |
| RHD4CZ2L102SW3500 |  | Finishing, Benching, Testing works for MH 1200 mm - (RD-L-10/2)-Z2-L102-SW | 8d | 2027-06-12 | 2027-06-21 | RHD4CZ2L102SW3400 |  | -189.02d |
|  | 957 | **RHD4-02-002-L102-(SW)-MH Works - 1200 mm diameter with Back drop** |  |  |  |  |  |  |
|  | 952 | **RHD4-02-002-L102-(SW)-UPVC Pipes - 200 mm diameter** |  | 2026-10-27 | 2027-06-19 |  |  |  |
| RHD4CZ2L102SW2100 |  | Excavation works for UPVC Pipe Line 200 mm - (RD-L-10/2)-Z2-L102-SW | 5d | 2026-10-27 A | 2027-05-12 | RHD4ENSDZ2APPSW120, RHD4CZ2L102SW3100 | 58% | -173.02d |
| RHD4CZ2L102SW2200 |  | Bedding works for UPVC Pipe Line 200 mm - (RD-L-10/2)-Z2-L102-SW | 5d | 2026-10-29 A | 2027-05-19 | RHD4CZ2L102SW2100 | 54% | -173.02d |
| RHD4CZ2L102SW2300 |  | Installing for UPVC Pipe Line 200 mm - (RD-L-10/2)-Z2-L102-SW | 6d | 2026-10-31 A | 2027-06-08 | RHD4PRSHLDOSSW1001, RHD4PRSHLSTAGSW1001, RHD4CZ2L102SW2200, RHD4CZ2L102SW3300 | 55% | -188.02d |
| RHD4CZ2L102SW2400 |  | Primary Test for UPVC Pipe Line 200 mm - (RD-L-10/2)-Z2-L102-SW | 3d | 2027-06-08 | 2027-06-12 | RHD4CZ2L102SW2300 |  | -188.02d |
| RHD4CZ2L102SW2500 |  | Backfilling and warning tape works for UPVC Pipe Line 200 mm - (RD-L-10/2)-Z2-L102-SW | 6d | 2027-06-12 | 2027-06-19 | RHD4CZ2L102SW2400 |  | -188.02d |
|  | 955 | **RHD4-02-002-L102-(SW)-Concrete Encasement** |  |  |  |  |  |  |
|  | 983 | **RHD4-02-002-Z2-L102-Potable Network - PT** |  | 2027-06-19 | 2027-08-22 |  |  |  |
|  | 985 | **RHD4-02-002-L102-(PT)-HDPE Pipes - 160 mm diameter** |  | 2027-06-19 | 2027-07-21 |  |  |  |
| RHD4CZ2L102PT1101 |  | Excavation works for HDPE Pipline 160 mm - (RD-L-10/2)-Z2-L102-PT | 5d | 2027-06-19 | 2027-06-24 | RHD4ENSDZ2APPPT130, RHD4ENMSPT2000, RHD4CZ2L102SW2500, RHD4CZ7RA05ICT2400, RHD4CZ8A011ST7300 |  | -188.02d |
| RHD4CZ2L102PT1201 |  | Bedding works for HDPE Pipline 160 mm - (RD-L-10/2)-Z2-L102-PT | 4d | 2027-06-24 | 2027-06-29 | RHD4CZ2L102PT1101 |  | -187.02d |
| RHD4CZ2L102PT1301 |  | Installing for HDPE Pipline 160 mm - (RD-L-10/2)-Z2-L102-PT | 7d | 2027-06-29 | 2027-07-07 | RHD4PRSHLDOSPT1000, RHD4PRSHLSTAGPT1000, RHD4CZ2L102PT1201 |  | -187.02d |
| RHD4CZ2L102PT1401 |  | Primary Test for HDPE Pipline 160 mm - (RD-L-10/2)-Z2-L102-PT | 3d | 2027-07-11 | 2027-07-14 | RHD4CZ2L102PT1301, RHD4CZ2L102PT3100, RHD4CZ2C082PT2401, RHD4CZ5L016IRR1504 |  | -187.02d |
| RHD4CZ2L102PT1501 |  | Backfilling and warning tape works for HDPE Pipline 160 mm - (RD-L-10/2)-Z2-L102-PT | 6d | 2027-07-14 | 2027-07-21 | RHD4CZ2L102PT1401 |  | -186.02d |
|  | 984 | **RHD4-02-002-L102-(PT)-HDPE Pipes - 110 mm diameter** |  | 2027-06-24 | 2027-07-24 |  |  |  |
| RHD4CZ2L102PT1100 |  | Excavation works for HDPE Pipline 110 mm - (RD-L-10/2)-Z2-L102-PT | 2d | 2027-06-24 | 2027-06-27 | RHD4ENSDZ2APPPT130, RHD4ENMSPT2000, RHD4CZ2L102PT1101 |  | -180.02d |
| RHD4CZ2L102PT1200 |  | Bedding works for HDPE Pipline 110 mm - (RD-L-10/2)-Z2-L102-PT | 2d | 2027-06-29 | 2027-07-01 | RHD4CZ2L102PT1100, RHD4CZ2L102PT1201 |  | -182.02d |
| RHD4CZ2L102PT1300 |  | Installing for HDPE Pipline 110 mm - (RD-L-10/2)-Z2-L102-PT | 2d | 2027-07-07 | 2027-07-10 | RHD4PRSHLDOSPT1000, RHD4PRSHLSTAGPT1000, RHD4CZ2L102PT1200, RHD4CZ2L102PT1301 |  | -187.02d |
| RHD4CZ2L102PT1400 |  | Primary Test for HDPE Pipline 110 mm - (RD-L-10/2)-Z2-L102-PT | 2d | 2027-07-14 | 2027-07-17 | RHD4CZ2L102PT1300, RHD4CZ2L102PT1401 |  | -182.02d |

| ID | WBS | Task | Duration | Start | Finish | Predecessors | Total float |
| --- | --- | --- | --- | --- | --- | --- | --- |
| RHD4CZ2L102PT1500 |  | Backfilling and warning tape works for HDPE Pipline 110 mm - (RD-L-10/2)-Z2-L102-PT | 2d | 2027-07-21 | 2027-07-24 | RHD4CZ2L102PT1400, RHD4CZ2L102PT1501 | -186.02d |
|  | 989 | **RHD4-02-002-L102-(PT)-Gate Valves (Direct Buried)** |  | 2027-07-07 | 2027-07-27 |  |  |
| RHD4CZ2L102PT3100 |  | Installation for Direct Buried Gate Valves - (RD-L-10/2)-Z2-L102-PT | 3d | 2027-07-07 | 2027-07-11 | RHD4PRSHLDOSPT1200, RHD4PRSHLSTAGPT1200, RHD4CZ2L102PT1301 FF, RHD4CZ2L102PT1300 FF, RHD4CZ2L102PT1301 SS, RHD4CZ2L102PT1300 SS | -187.02d |
| RHD4CZ2L102PT3200 |  | Stem and Service box for Direct Buried Gate Valves - (RD-L-10/2)-Z2-L102-PT | 3d | 2027-07-24 | 2027-07-27 | RHD4PRSHLDOSPT1300, RHD4PRSHLSTAGPT1300, RHD4CZ2L102PT3100, RHD4CZ2L102PT1501, RHD4CZ2L102PT1500 | -185.02d |
|  | 992 | **RHD4-02-002-L102-(PT)-Wash out Valve Chambers** |  | 2027-07-21 | 2027-07-31 |  |  |
| RHD4CZ2L102PT2101 |  | Excavation and Bedding for Wash out Valve Chambers for Potable Water Network - (RD-L-10/2)-Z2-L102-PT | 2d | 2027-07-21 | 2027-07-24 | RHD4ENSDZ2APPPT130, RHD4CZ2L102PT1501 | -186.02d |
| RHD4CZ2L102PT2201 |  | PC works for Wash out Valve Chambers for Potable Water Network - (RD-L-10/2)-Z2-L102-PT | 2d | 2027-07-24 | 2027-07-26 | RHD4CZ2L102PT2101 | -186.02d |
| RHD4CZ2L102PT2301 |  | Installation for Wash out Valve Chambers for Potable Water Network - (RD-L-10/2)-Z2-L102-PT | 2d | 2027-07-26 | 2027-07-28 | RHD4PRSHLDOSPT1100, RHD4PRSHLDOSPT1400, RHD4PRSHLSTAGPT1100, RHD4PRSHLSTAGPT1400, RHD4CZ2L102PT2201 | -186.02d |
| RHD4CZ2L102PT2401 |  | Backfilling works for Wash out Valve Chambers for Potable Water Network - (RD-L-10/2)-Z2-L102-PT | 2d | 2027-07-28 | 2027-07-31 | RHD4CZ2L102PT2301, RHD4CZ2L102PT3200 | -186.02d |
|  | 993 | **RHD4-02-002-L102-(PT)-Wash out Valves** |  | 2027-07-26 | 2027-08-02 |  |  |
| RHD4CZ2L102PT3102 |  | Installation for Wash out Valves for Potable Water Network - (RD-L-10/2)-Z2-L102-PT | 2d | 2027-07-26 | 2027-07-28 | RHD4PRSHLDOSPT1200, RHD4PRSHLSTAGPT1200, RHD4CZ2L102PT2301 SS | -184.02d |
| RHD4CZ2L102PT3202 |  | Stem and Service box for Wash out Valves for Potable Water Network - (RD-L-10/2)-Z2-L102-PT | 2d | 2027-07-31 | 2027-08-02 | RHD4PRSHLDOSPT1300, RHD4PRSHLSTAGPT1300, RHD4CZ2L102PT3102, RHD4CZ2L102PT2401 | -186.02d |
|  | 994 | **RHD4-02-002-L102-(PT)-Air Valve Chambers** |  | 2027-07-24 | 2027-08-02 |  |  |
| RHD4CZ2L102PT2102 |  | Excavation and Bedding for Air Valve Chambers for Potable Water Network - (RD-L-10/2)-Z2-L102-PT | 2d | 2027-07-24 | 2027-07-26 | RHD4ENSDZ2APPPT130, RHD4CZ2L102PT1501, RHD4CZ2L102PT1500 | -186.02d |
| RHD4CZ2L102PT2202 |  | PC works for Air Valve Chambers for Potable Water Network - (RD-L-10/2)-Z2-L102-PT | 2d | 2027-07-26 | 2027-07-28 | RHD4CZ2L102PT2102 | -186.02d |
| RHD4CZ2L102PT2302 |  | Installation for Air Valve Chambers for Potable Water Network - (RD-L-10/2)-Z2-L102-PT | 2d | 2027-07-28 | 2027-07-31 | RHD4PRSHLDOSPT1100, RHD4PRSHLDOSPT1400, RHD4PRSHLSTAGPT1100, RHD4PRSHLSTAGPT1400, RHD4CZ2L102PT2202 | -186.02d |
| RHD4CZ2L102PT2402 |  | Backfilling works for Air Valve Chambers for Potable Water Network - (RD-L-10/2)-Z2-L102-PT | 2d | 2027-07-31 | 2027-08-02 | RHD4CZ2L102PT2302 | -186.02d |
|  | 995 | **RHD4-02-002-L102-(PT)-Air Valves** |  | 2027-07-31 | 2027-08-04 |  |  |
| RHD4CZ2L102PT3103 |  | Installation for Air Valves for Potable Water Network - (RD-L-10/2)-Z2-L102-PT | 2d | 2027-07-31 | 2027-08-02 | RHD4PRSHLDOSPT1200, RHD4PRSHLSTAGPT1200, RHD4CZ2L102PT2302 | -186.02d |
| RHD4CZ2L102PT3203 |  | Stem and Service box for Air Valves for Potable Water Network - (RD-L-10/2)-Z2-L102-PT | 2d | 2027-08-02 | 2027-08-04 | RHD4PRSHLDOSPT1300, RHD4PRSHLSTAGPT1300, RHD4CZ2L102PT3103, RHD4CZ2L102PT2402 | -186.02d |
|  | 996 | **RHD4-02-002-L102-(PT)-Fire Hydrant** |  | 2027-07-24 | 2027-08-22 |  |  |
| RHD4CZ2L102PT4100 |  | Excavation and Bedding and Pipe Installation for Fire Hydrant - (RD-L-10/2)-Z2-L102-PT | 7d | 2027-07-24 | 2027-08-01 | RHD4ENSDZ2APPPT130, RHD4CZ2L102PT1501, RHD4CZ2L102PT1500 | -169.02d |
| RHD4CZ2L102PT4200 |  | Valve Installation for Fire Hydrant - (RD-L-10/2)-Z2-L102-PT | 5d | 2027-08-01 | 2027-08-07 | RHD4CZ2L102PT4100 | -169.02d |
| RHD4CZ2L102PT4300 |  | Stem for Fire Hydrant - (RD-L-10/2)-Z2-L102-PT | 5d | 2027-08-07 | 2027-08-12 | RHD4CZ2L102PT4200 | -169.02d |
| RHD4CZ2L102PT4400 |  | Fire Installation for Fire Hydrant - (RD-L-10/2)-Z2-L102-PT | 5d | 2027-08-12 | 2027-08-18 | RHD4PRSHLDOSPT1500, RHD4PRSHLSTAGPT1500, RHD4CZ2L102PT4300 | -169.02d |
| RHD4CZ2L102PT4500 |  | Protection Barriers for Fire Hydrant - (RD-L-10/2)-Z2-L102-PT | 3d | 2027-08-18 | 2027-08-22 | RHD4CZ2L102PT4400 | -169.02d |
|  | 997 | **RHD4-02-002-L102-(PT)-Concrete Encasement** |  |  |  |  |  |
|  | 998 | **RHD4-02-002-Z2-L102-Irrigation Network - IRR** |  | 2027-07-14 | 2027-09-04 |  |  |
|  | 1005 | **RHD4-02-002-L102-(IRR)-HDPE Pipes - 450 mm diameter** |  |  |  |  |  |
|  | 1004 | **RHD4-02-002-L102-(IRR)-HDPE Pipes - 400 mm diameter** |  |  |  |  |  |
|  | 1003 | **RHD4-02-002-L102-(IRR)-HDPE Pipes - 315 mm diameter** |  | 2027-07-14 | 2027-08-30 |  |  |
| RHD4CZ2L102IRR1104 |  | Excavation works for HDPE Pipline 315 mm - (RD-L-10/2)-Z2-L102-IRR | 7d | 2027-07-14 | 2027-07-22 | RHD4ENSDZ2APPIRR140, RHD4ENMSRR2000, RHD4CZ2L102PT1401, RHD4CZ2L102PT1101, RHD4CZ2L102PT1100, RHD4CZ9L05PT5100 | -187.02d |
| RHD4CZ2L102IRR1204 |  | Bedding works for HDPE Pipline 315 mm - (RD-L-10/2)-Z2-L102-IRR | 6d | 2027-07-22 | 2027-07-29 | RHD4CZ2L102IRR1104, RHD4CZ4A013PT4500 | -183.02d |
| RHD4CZ2L102IRR1304 |  | Installing for HDPE Pipline 315 mm - (RD-L-10/2)-Z2-L102-IRR | 7d | 2027-08-11 | 2027-08-19 | RHD4PRSHLDOSIRR1000, RHD4PRSHLSTAGIRR1000, RHD4CZ2L102IRR1204, RHD4CZ4L09IRR3200, RHD4CZ5L016IRR3203 | -194.02d |
| RHD4CZ2L102IRR1404 |  | Primary Test for HDPE Pipline 315 mm - (RD-L-10/2)-Z2-L102-IRR | 3d | 2027-08-19 | 2027-08-23 | RHD4CZ2L102IRR1304, RHD4CZ2L102IRR3100 | -194.02d |
| RHD4CZ2L102IRR1504 |  | Backfilling and warning tape works for HDPE Pipline 315 mm - (RD-L-10/2)-Z2-L102-IRR | 6d | 2027-08-23 | 2027-08-30 | RHD4CZ2L102IRR1404, RHD4CZ7L131SW1201 FF | -194.02d |
|  | 1001 | **RHD4-02-002-L102-(IRR)-HDPE Pipes - 200 mm diameter** |  |  |  |  |  |
|  | 6863 | **RHD4-02-002-L102-(IRR)-HDPE Pipes - 160 mm diameter** |  | 2027-07-14 | 2027-07-26 |  |  |
| RHD4CZ2L102IRR1100 |  | Excavation works for HDPE Pipline 160 mm - (RD-L-10/2)-Z2-L102-IRR | 2d | 2027-07-14 | 2027-07-17 | RHD4CZ2L102IRR1104 SS | -177.02d |
| RHD4CZ2L102IRR1200 |  | Bedding works for HDPE Pipline 160 mm - (RD-L-10/2)-Z2-L102-IRR | 2d | 2027-07-17 | 2027-07-19 | RHD4CZ2L102IRR1100 | -177.02d |
| RHD4CZ2L102IRR1300 |  | Installing for HDPE Pipline 160 mm - (RD-L-10/2)-Z2-L102-IRR | 2d | 2027-07-19 | 2027-07-21 | RHD4CZ2L102IRR1200 | -177.02d |
| RHD4CZ2L102IRR1400 |  | Primary Test for HDPE Pipline 160 mm - (RD-L-10/2)-Z2-L102-IRR | 2d | 2027-07-21 | 2027-07-24 | RHD4CZ2L102IRR1300 | -177.02d |
| RHD4CZ2L102IRR1500 |  | Backfilling and warning tape works for HDPE Pipline 160 mm - (RD-L-10/2)-Z2-L102-IRR | 2d | 2027-07-24 | 2027-07-26 | RHD4CZ2L102IRR1400, RHD4CZ2L102ST1502 | -177.02d |
|  | 1007 | **RHD4-02-002-L102-(IRR)-Gate Valves (Direct Buried)** |  | 2027-08-15 | 2027-09-04 |  |  |
| RHD4CZ2L102IRR3100 |  | Installation for Direct Buried Gate Valves - (RD-L-10/2)-Z2-L102-IRR | 4d | 2027-08-15 | 2027-08-19 | RHD4CZ7C02ST1500, RHD4PRSHLDOSIRR1100, RHD4PRSHLSTAGIRR1100, RHD4CZ2L102IRR1304 SS, RHD4CZ2L102IRR1304 FF, RHD4CZ9L05ST3500 | -194.02d |
| RHD4CZ2L102IRR3200 |  | Stem and Service box for Direct Buried Gate Valves - (RD-L-10/2)-Z2-L102-IRR | 4d | 2027-08-30 | 2027-09-04 | RHD4PRSHLDOSIRR1300, RHD4PRSHLSTAGIRR1300, RHD4CZ2L102IRR3100, RHD4CZ2L102IRR1504, RHD4CZ4L014IRR1503 | -194.02d |
|  | 1032 | **RHD4-02-002-Z2-L102-Medium Voltage Network - MV** |  | 2027-06-24 | 2027-09-09 |  |  |
|  | 1033 | **RHD4-02-002-L102-(MV)-Medium Voltage cable trench** |  | 2027-06-24 | 2027-08-28 |  |  |
| RHD4CZ2L102MV1100 |  | Excavation for Medium Voltage Trench - (RD-L-10/2)-Z2-L102-MV | 21d | 2027-06-24 | 2027-07-19 | RHD4ENSDZ2APPMV150, RHD4CZ2L102RD3100, RHD4CZ2L102PT1101 | -188.02d |
| RHD4CZ2L102MV1200 |  | Trench Backfilling for Medium Voltage Network - (RD-L-10/2)-Z2-L102-MV | 21d | 2027-08-03 | 2027-08-28 | RHD4CZ2L102MV3200, RHD4CZ2L102MV1100 | -188.02d |
|  | 1034 | **RHD4-02-002-L102-(MV)-Medium Voltage duct banks** |  |  |  |  |  |
|  | 1035 | **RHD4-02-002-L102-(MV)-Medium Voltage cables 3Cx 500 mm²** |  | 2027-07-19 | 2027-09-09 |  |  |
| RHD4CZ2L102MV3100 |  | Installation of Medium Voltage Cables 3Cx 500 mm² - (RD-L-10/2)-Z2-L102-MV | 9d | 2027-07-19 | 2027-07-29 | RHD4PRSHLDOSMV1100, RHD4ENMSMV2000, RHD4ENMSMV2010, RHD4PRSHLSTAGMV1100, RHD4CZ2L102MV1100 | -188.02d |
| RHD4CZ2L102MV3200 |  | Joints Installation of Medium Voltage Cables 3Cx 500 mm² - (RD-L-10/2)-Z2-L102-MV | 4d | 2027-07-29 | 2027-08-03 | RHD4PRSHLDOSMV1300, RHD4PRSHLSTAGMV1300, RHD4CZ2L102MV3100 | -188.02d |
| RHD4CZ2L102MV3300 |  | Testing of Medium Voltage Cables 3Cx 500 mm² - (RD-L-10/2)-Z2-L102-MV | 9d | 2027-08-28 | 2027-09-07 | RHD4CZ2L102MV3200, RHD4CZ2L102MV1200, RHD4CZ2L102MV4200 | -184.02d |
| RHD4CZ2L102MV3400 |  | Termination of Medium Voltage Cables 3Cx 500 mm² - (RD-L-10/2)-Z2-L102-MV | 2d | 2027-09-07 | 2027-09-09 | RHD4CZ2L102MV3300, RHD4CZ2L102MV1200 | -184.02d |
|  | 1036 | **RHD4-02-002-L102-(MV)-Medium Voltage cables 3Cx 50 mm²** |  | 2027-08-28 | 2027-08-30 |  |  |
| RHD4CZ2L102MV3401 |  | Termination of Medium Voltage Cables 3Cx 50 mm² - (RD-L-10/2)-Z2-L102-MV | 2d | 2027-08-28 | 2027-08-30 | RHD4CZ2L102MV1200, RHD4CZ2L102MV1100 | -175.02d |
|  | 1037 | **RHD4-02-002-L102-(MV)-Normally open Point (Outdoor Type)** |  | 2027-07-27 | 2027-08-01 |  |  |
| RHD4CZ2L102MV4100 |  | Installation for Normally open Point - (RD-L-10/2)-Z2-L102-MV | 2d | 2027-07-27 | 2027-07-29 | RHD4PRSHLDOSMV1400, RHD4PRSHLSTAGMV1400, RHD4CZ2L102MV3100 FF, RHD4CZ2L102MV1100 | -169.02d |
| RHD4CZ2L102MV4200 |  | Termination for Normally open Point - (RD-L-10/2)-Z2-L102-MV | 2d | 2027-07-29 | 2027-08-01 | RHD4CZ2L102MV4100 | -169.02d |
|  | 5390 | **RHD4-02-002-Z2-L102-Low Voltage Network - LV** |  | 2027-07-22 | 2027-08-10 |  |  |
|  | 5393 | **RHD4-02-002-L102-(LV)-Low Voltage cables** |  | 2027-07-22 | 2027-08-10 |  |  |
| RHD4CZ2L102LV3100 |  | Excavation for Low Voltage Cables for Low Voltage Network - (RD-L-10/2)-Z2-L102-LV | 5d | 2027-07-22 | 2027-07-28 | RHD4CZ2L102IRR1104 | -187.02d |
| RHD4CZ2L102LV3200 |  | Cable Laying of Low Voltage Cables for Low Voltage Network - (RD-L-10/2)-Z2-L102-LV | 4d | 2027-07-28 | 2027-08-02 | RHD4CZ2L102LV3100 | -187.02d |
| RHD4CZ2L102LV3300 |  | Warning tape and Backfill for Low Voltage Cables for Low Voltage Network - (RD-L-10/2)-Z2-L102-LV | 4d | 2027-08-02 | 2027-08-07 | RHD4CZ2L102LV3200 | -187.02d |
| RHD4CZ2L102LV3400 |  | Testing of Low Voltage Cables for Low Voltage Network - (RD-L-10/2)-Z2-L102 | 3d | 2027-08-07 | 2027-08-10 | RHD4CZ2L102LV3300, RHD4CZ2L102IRR1500, RHD4CZ1C081LV3400 | -187.02d |
|  | 1045 | **RHD4-02-002-Z2-L102-Street Lighting Network - SL** |  | 2027-08-04 | 2027-11-04 |  |  |
|  | 1046 | **RHD4-02-002-L102-(SL)-Street Lighting duct banks** |  | 2027-08-04 | 2027-08-24 |  |  |
| RHD4CZ2L102SL2100 |  | Excavation of Duct Banks for Street Lighting Network - (RD-L-10/2)-Z2-L102-SL | 4d | 2027-08-04 | 2027-08-09 | RHD4ENSDZ2APPSL170, RHD4CZ2L102PT3203 | -186.02d |

| ID | WBS | Task | Duration | Start | Finish | Predecessors | Total float |
| --- | --- | --- | --- | --- | --- | --- | --- |
| RHD4CZ2L102SL2200 |  | Installation of Duct Banks for Street Lighting Network - (RD-L-10/2)-Z2-L102-SL | 6d | 2027-08-09 | 2027-08-16 | RHD4PRSHLDOSSL1000, RHD4PRSHLSTAGSL1000, RHD4CZ2L102SL2100 | -186.02d |
| RHD4CZ2L102SL2300 |  | Pouring of Duct Banks for Street Lighting Network - (RD-L-10/2)-Z2-L102-SL | 4d | 2027-08-16 | 2027-08-21 | RHD4CZ2L102SL2200 | -186.02d |
| RHD4CZ2L102SL2400 |  | Backfilling of Duct Banks for Street Lighting Network - (RD-L-10/2)-Z2-L102-SL | 3d | 2027-08-21 | 2027-08-24 | RHD4CZ2L102SL2300 | -185.02d |
|  | 1047 | **RHD4-02-002-L102-(SL)-Street Lighting Drawpit** |  | 2027-08-21 | 2027-08-25 |  |  |
| RHD4CZ2L102SL5100 |  | Excavation of Drawpit size 600x600x900mm for Street Lighting Network - (RD-L-10/2)-Z2-L102-SL | 2d | 2027-08-21 | 2027-08-23 | RHD4ENSDZ2APPSL170, RHD4CZ2L102SL2300, RHD4CZ2L102MV4200, RHD4CZ2L102LV3100 | -186.02d |
| RHD4CZ2L102SL5200 |  | Installation of Drawpit size 600x600x900mm for Street Lighting Network - (RD-L-10/2)-Z2-L102-SL | 2d | 2027-08-23 | 2027-08-25 | RHD4PRSHLDOSSL1400, RHD4PRSHLSTAGSL1400, RHD4CZ2L102SL5100 | -186.02d |
|  | 1048 | **RHD4-02-002-L102-(SL)-Street Lighting cables** |  | 2027-09-14 | 2027-10-20 |  |  |
| RHD4CZ2L102SL3100 |  | Excavation for Street Lighting Cables for Street Lighting Network - (RD-L-10/2)-Z2-L102-SL | 9d | 2027-09-14 | 2027-09-26 | RHD4ENSDZ2APPSL170, RHD4CZ2L102SL1300, RHD4CZ2L102MV3401, RHD4CZ2L102MV3400 | -188.02d |
| RHD4CZ2L102SL3200 |  | Cable Laying of Street Lighting Cables for Street Lighting Network - (RD-L-10/2)-Z2-L102-SL | 8d | 2027-09-26 | 2027-10-05 | RHD4PRSHLDOSSL1100, RHD4ENMSSL2000, RHD4ENMSSL2010, RHD4PRSHLSTAGSL1100, RHD4CZ2L102SL3100 | -188.02d |
| RHD4CZ2L102SL3300 |  | Warning tape and Backfill for Street Lighting Cables for Street Lighting Network - (RD-L-10/2)-Z2-L102-SL | 8d | 2027-10-05 | 2027-10-14 | RHD4CZ2L102SL3200 | -188.02d |
| RHD4CZ2L102SL3400 |  | Testing of Street Lighting Cables for Street Lighting Network - (RD-L-10/2)-Z2-L102-SL | 5d | 2027-10-14 | 2027-10-20 | RHD4CZ2L102SL3300 | -188.02d |
|  | 1049 | **RHD4-02-002-L102-(SL)-Street Lighting Poles** |  | 2027-08-28 | 2027-11-04 |  |  |
| RHD4CZ2L102SL1100 |  | Excavation for RC Base for Lighting Poles for Street Lighting Network - (RD-L-10/2)-Z2-L102-SL | 5d | 2027-08-28 | 2027-09-02 | RHD4ENSDZ2APPSL170, RHD4CZ2L102SL2400, RHD4CZ2L102MV1200, RHD4CZ2L102SL5200 | -188.02d |
| RHD4CZ2L102SL1200 |  | Installation for RC Base for Lighting Poles for Street Lighting Network - (RD-L-10/2)-Z2-L102-SL | 5d | 2027-09-02 | 2027-09-08 | RHD4CZ2L102SL1100 | -188.02d |
| RHD4CZ2L102SL1300 |  | Backfill for RC Base for Lighting Poles for Street Lighting Network - (RD-L-10/2)-Z2-L102-SL | 5d | 2027-09-08 | 2027-09-14 | RHD4CZ2L102SL1200 | -188.02d |
| RHD4CZ2L102SL1400 |  | Installation for Lighting Poles for Street Lighting Network - (RD-L-10/2)-Z2-L102-SL | 8d | 2027-10-20 | 2027-10-30 | RHD4PRSHLDOSSL1200, RHD4ENMSSL2000, RHD4ENMSSL2010, RHD4PRSHLSTAGSL1200, RHD4CZ2L102SL1300, RHD4CZ2L102SL3400 | -188.02d |
| RHD4CZ2L102SL1500 |  | Luminaire Installation for Lighting Poles for Street Lighting Network - (RD-L-10/2)-Z2-L102-SL | 5d | 2027-10-30 | 2027-11-04 | RHD4PRSHLDOSSL1300, RHD4PRSHLSTAGSL1300, RHD4CZ2L102SL1400 | -188.02d |
|  | 1051 | **RHD4-02-002-L102-(SL)-Street Lighting Earthing System** |  | 2027-10-30 | 2027-11-01 |  |  |
| RHD4CZ2L102SL6100 |  | Installation of Earthing for Lighting Poles and Fedder Pillers for Street Lighting Network - (RD-L-10/2)-Z2-L102-SL | 2d | 2027-10-30 | 2027-11-01 | RHD4ENMSER2000, RHD4ENMSER2010, RHD4CZ2L102SL1400, RHD4CZ2L102SL3300 | -186.02d |
|  | 1057 | **RHD4-02-002-Z2-L102-Telecommunications Network - TC** |  | 2027-11-01 | 2027-12-20 |  |  |
|  | 1058 | **RHD4-02-002-L102-(TC)-Telecommunications Ducts** |  | 2027-11-01 | 2027-12-20 |  |  |
| RHD4CZ2L102TC2100 |  | Excavation of HDPE Ducts for Telecom Network - (RD-L-10/2)-Z2-L102-TC | 15d | 2027-11-01 | 2027-11-18 | RHD4ENSDZ2APPTC190, RHD4CZ2L102SL2400, RHD4CZ2L102SL2300, RHD4CZ2L102SL2200, RHD4CZ2L102SL2100, RHD4CZ2L102SL3300, RHD4CZ2L102SL6100 | -186.02d |
| RHD4CZ2L102TC2200 |  | Installation of HDPE Ducts for Telecom Network - (RD-L-10/2)-Z2-L102-TC | 9d | 2027-11-18 | 2027-11-29 | RHD4PRSHLDOSTC1000, RHD4PRSHLSTAGTC1000, RHD4CZ2L102TC2100 | -183.02d |
| RHD4CZ2L102TC2400 |  | Backfilling of HDPE Ducts for Telecom Network - (RD-L-10/2)-Z2-L102-TC | 15d | 2027-12-02 | 2027-12-20 | RHD4CZ2L102TC2200, RHD4CZ2L102TC5200 | -186.02d |
|  | 1059 | **RHD4-02-002-L102-(TC)-Telecommunications Manholes** |  | 2027-11-18 | 2027-12-02 |  |  |
| RHD4CZ2L102TC5100 |  | Excavation for Manholes for Telecom Network - (RD-L-10/2)-Z2-L102-TC | 6d | 2027-11-18 | 2027-11-25 | RHD4ENSDZ2APPTC190, RHD4CZ2L102TC2100, RHD4CZ2L102SL6100 | -186.02d |
| RHD4CZ2L102TC5200 |  | Installation of Manholes for Telecom Network - (RD-L-10/2)-Z2-L102-TC | 6d | 2027-11-25 | 2027-12-02 | RHD4PRSHLDOSTC1200, RHD4PRSHLSTAGTC1200, RHD4CZ2L102TC5100, RHD4CZ2L102TC2200 SS | -186.02d |
|  | 1061 | **RHD4-02-002-Z2-L102-Information and Communication Technologies - ICT** |  | 2027-11-01 | 2027-12-20 |  |  |
|  | 1062 | **RHD4-02-002-L102-(ICT)-Information and Communication Technologies Ducts** |  | 2027-11-01 | 2027-12-20 |  |  |
| RHD4CZ2L102ICT2100 |  | Excavation of HDPE Ducts for ICT Network - (RD-L-10/2)-Z2-L102-ICT | 15d | 2027-11-01 | 2027-11-18 | RHD4ENSDZ2APPICT200, RHD4CZ2L102SL2100, RHD4CZ2L102SL2200, RHD4CZ2L102SL2300, RHD4CZ2L102SL2400, RHD4CZ2L102SL3300, RHD4CZ2L102SL6100 | -186.02d |
| RHD4CZ2L102ICT2200 |  | Installation of HDPE Ducts for ICT Network - (RD-L-10/2)-Z2-L102-ICT | 9d | 2027-11-18 | 2027-11-29 | RHD4PRSHLDOSICT1000, RHD4PRSHLSTAGICT1000, RHD4CZ2L102ICT2100 | -183.02d |
| RHD4CZ2L102ICT2400 |  | Backfilling of HDPE Ducts for ICT Network - (RD-L-10/2)-Z2-L102-ICT | 15d | 2027-12-02 | 2027-12-20 | RHD4CZ2L102ICT2200, RHD4CZ2L102ICT5200 | -186.02d |
|  | 1063 | **RHD4-02-002-L102-(ICT)-Information and Communication Technologies Manholes** |  | 2027-11-18 | 2027-12-02 |  |  |
| RHD4CZ2L102ICT5100 |  | Excavation for Manholes for ICT Network - (RD-L-10/2)-Z2-L102-ICT | 6d | 2027-11-18 | 2027-11-25 | RHD4ENSDZ2APPICT200, RHD4CZ2L102ICT2100, RHD4CZ2L102SL6100 | -186.02d |
| RHD4CZ2L102ICT5200 |  | Installation of Manholes for ICT Network - (RD-L-10/2)-Z2-L102-ICT | 6d | 2027-11-25 | 2027-12-02 | RHD4PRSHLDOSICT1200, RHD4PRSHLSTAGICT1200, RHD4CZ2L102ICT5100 | -186.02d |
|  | 1052 | **RHD4-02-002-Z2-L102-Landscape Network - LS** |  |  |  |  |  |
|  | 1053 | **RHD4-02-002-L102-(LS)-Landscape Lighting cables** |  |  |  |  |  |
|  | 1054 | **RHD4-02-002-L102-(LS)-Landscape Feeder Pillars** |  |  |  |  |  |
|  | 1055 | **RHD4-02-002-L102-(LS)-Landscape Bollard Poles** |  |  |  |  |  |
|  | 1056 | **RHD4-02-002-L102-(LS)-Landscape Feeder Pillars Earthing** |  |  |  |  |  |
|  | 1065 | **RHD4-02-002-Z2-L102-Security Network - CCTV** |  | 2027-12-20 | 2028-02-03 |  |  |
|  | 1066 | **RHD4-02-002-L102-(CCTV)-Civil Works** |  | 2027-12-20 | 2028-01-01 |  |  |
| RHD4CZ2L102CCTV2100 |  | Civil Works for Security Network - (RD-L-10/2)-Z2-L102-CCTV | 10d | 2027-12-20 | 2028-01-01 | RHD4CZ2L102ICT2400, RHD4CZ2L102TC2400 | -186.02d |
|  | 1067 | **RHD4-02-002-L102-(CCTV)-CCTV Poles** |  | 2028-01-01 | 2028-01-12 |  |  |
| RHD4CZ2L102CCTV1100 |  | Excavation for RC Base for CCTV Poles for Security Network - (RD-L-10/2)-Z2-L102-CCTV | 2d | 2028-01-01 | 2028-01-03 | RHD4ENSDZ2APPCCTV210, RHD4CZ2L102CCTV2100, RHD4CZ2L102CCTV2100 FF | -186.02d |
| RHD4CZ2L102CCTV1200 |  | Installation for RC Base for CCTV Poles for Security Network - (RD-L-10/2)-Z2-L102-CCTV | 2d | 2028-01-03 | 2028-01-05 | RHD4CZ2L102CCTV1100 | -186.02d |
| RHD4CZ2L102CCTV1300 |  | Backfill for RC Base for CCTV Poles for Security Network - (RD-L-10/2)-Z2-L102-CCTV | 2d | 2028-01-05 | 2028-01-08 | RHD4CZ2L102CCTV1200 | -186.02d |
| RHD4CZ2L102CCTV1400 |  | Installation for CCTV Poles for Security Network - (RD-L-10/2)-Z2-L102-CCTV | 2d | 2028-01-08 | 2028-01-10 | RHD4PRSHLDOSCCTV1000, RHD4PRSHLSTACCTV1000, RHD4CZ2L102CCTV1300 | -186.02d |
| RHD4CZ2L102CCTV1500 |  | Protection post Installation for CCTV Poles for Security Network - (RD-L-10/2)-Z2-L102-CCTV | 2d | 2028-01-10 | 2028-01-12 | RHD4CZ2L102CCTV1400 | -184.02d |
|  | 1068 | **RHD4-02-002-L102-(CCTV)-Camera** |  | 2028-01-15 | 2028-01-17 |  |  |
| RHD4CZ2L102CCTV3100 |  | Installation for Cameras for Security Network - (RD-L-10/2)-Z2-L102-CCTV | 2d | 2028-01-15 | 2028-01-17 | RHD4PRSHLDOSCCTV1100, RHD4PRSHLSTACCTV1100, RHD4CZ2L102CCTV1400, RHD4CZ2L102CCTV4100, RHD4CZ2L102CCTV4200, RHD4CZ2L102CCTV1500 | -186.02d |
|  | 1069 | **RHD4-02-002-L102-(CCTV)-Power and Infrastructure** |  | 2028-01-10 | 2028-01-15 |  |  |
| RHD4CZ2L102CCTV4100 |  | Installation of Power outlet, UPS and midspan for PTZ Camerafor Cameras for Security Network - (RD-L-10/2)-Z2-L102-CCTV | 2d | 2028-01-10 | 2028-01-12 | RHD4PRSHLDOSCCTV1300, RHD4PRSHLSTACCTV1300, RHD4CZ2L102CCTV1400 | -186.02d |
| RHD4CZ2L102CCTV4200 |  | Short Range Wireless PoP wireless Bridgefor CCTV Poles for Security Network - (RD-L-10/2)-Z2-L102-CCTV | 2d | 2028-01-12 | 2028-01-15 | RHD4CZ2L102CCTV4100 | -186.02d |
|  | 1071 | **RHD4-02-002-L102-(CCTV)-CCTV Panels and Components** |  | 2028-01-17 | 2028-02-03 |  |  |
| RHD4CZ2L102CCTV6100 |  | Installation for CCTV Panels for Security Network - (RD-L-10/2)-Z2-L102-CCTV | 15d | 2028-01-17 | 2028-02-03 | RHD4PRSHLDOSCCTV1200, RHD4PRSHLSTACCTV1200, RHD4PRLOLSTACCTV1001, RHD4CZ2L102CCTV4200, RHD4CZ2L102CCTV3100 | -186.02d |
|  | 1082 | **RHD4-02-002-Z2-L011** |  | 2026-09-29 | 2027-07-06 |  |  |
|  | 1261 | **RHD4-02-002-Z2-L011-Road Works - RD** |  | 2027-02-21 | 2027-07-06 |  |  |
|  | 1262 | **RHD4-02-002-L011-(RD)-Subgrade** |  | 2027-02-21 | 2027-02-23 |  |  |
| RHD4CZ2L011RD1100 |  | Supply, lay and compaction subgrade compacted thickness 300 mm for Roads - (RD-L-11)-Z2-L011-RD | 2d | 2027-02-21 | 2027-02-23 | RHD4ENSDZ2APPEW100, RHD4ENSDZ2APPRD220, RHD4CZ2L011ST3500, RHD4CZ2L011ST1500, RHD4CZ2L011ST2500, RHD4CZ2L011ST7500, RHD4CZ2L011ICT3400, RHD4CZ2L011TC3400 | -173d |
|  | 1263 | **RHD4-02-002-L011-(RD)-Aggregate Base Course** |  | 2027-02-24 | 2027-02-25 |  |  |
| RHD4CZ2L011RD2100 |  | Supply, lay and compaction Aggregate base course compacted thickness 300 mmfor Roads - (RD-L-11)-Z2-L011-RD | 2d | 2027-02-24 | 2027-02-25 | RHD4PRSHLDOSRD1000, RHD4PRSHLSTAGRD1000, RHD4CZ2L011RD1100 | -173d |
|  | 1264 | **RHD4-02-002-L011-(RD)-Bituminous base course Two Layers, including (MC1)&(RC2)** |  | 2027-03-31 | 2027-06-26 |  |  |
| RHD4CZ2L011RD3100 |  | Supply, lay and Asphaltic base course including Prime Coat (MC1) for 1st Layer - (RD-L-11)-Z2-L011-RD | 2d | 2027-03-31 | 2027-04-01 | RHD4PRSHLDOSRD1100, RHD4ENMSASPH2000, RHD4ENMSASPH2010, RHD4PRSHLSTAGRD1100, RHD4CZ2L011RD2100, RHD4CZ2L102RD3100 SS, RHD4CZ9L02RD3100, RHD4CZ3L122RD3100 | -198d |
| RHD4CZ2L011RD3200 |  | Supply, lay and Asphaltic base course including Tack Coat (RC2) for 2nd Layer - (RD-L-11)-Z2-L011-RD | 2d | 2027-06-24 | 2027-06-26 | RHD4PRSHLDOSRD1100, RHD4PRSHLSTAGRD1100, RHD4CZ2L011RD3100, RHD4CZ2L011TC2400, RHD4CZ2L011ICT2400 | -158d |
|  | 1266 | **RHD4-02-002-L011-(RD)-Precast Concrete Curb** |  | 2027-06-27 | 2027-06-29 |  |  |
| RHD4CZ2L011RD5100 |  | Supply and installation Precast Concrete Kerb for Roads - (RD-L-11)-Z2-L011-RD | 3d | 2027-06-27 | 2027-06-29 | RHD4PRSHLDOSRD1200, RHD4ENMSRD2000, RHD4ENMSRD2010, RHD4PRSHLSTAGRD1200, RHD4CZ2L011RD3200 | -158d |
|  | 1269 | **RHD4-02-002-L011-(RD)-Traffic Signage** |  | 2027-06-30 | 2027-07-06 |  |  |
| RHD4CZ2L011RD8100 |  | Installation of Traffic Signage for Road Network - (RD-L-11)-Z2-L011-RD | 6d | 2027-06-30 | 2027-07-06 | RHD4PRSHLDOSRD1600, RHD4PRSHLSTAGRD1600, RHD4CZ2L011ICT2400, RHD4CZ2L011TC2400, RHD4CZ2L011RD5100, RHD4CZ2L011LV4300 | -119d |
|  | 1267 | **RHD4-02-002-L011-(RD)-Precast Interlocking Block Pavers** |  |  |  |  |  |

| ID | WBS | Task | Duration | Start | Finish | Predecessors | Complete | Total float |
| --- | --- | --- | --- | --- | --- | --- | --- | --- |
|  | 1265 | **RHD4-02-002-L011-(RD)-Bituminous concrete wearing course including tack coat (RC2)** |  | 2027-06-30 | 2027-07-01 |  |  |  |
| RHD4CZ2L011RD4100 |  | Supply, lay and compaction Asphaltic wearing course including tack Coat (RC2)for Road Network - (RD-L-11)-Z2-L011-RD | 2d | 2027-06-30 | 2027-07-01 | RHD4CZ2L011RD5100 |  | -158d |
|  | 1268 | **RHD4-02-002-L011-(RD)-Pavement Marking** |  | 2027-07-03 | 2027-07-04 |  |  |  |
| RHD4CZ2L011RD7100 |  | Pavement Markings for Road Network - (RD-L-11)-Z2-L011-RD | 2d | 2027-07-03 | 2027-07-04 | RHD4PRSHLDOSRD1500, RHD4PRSHLSTAGRD1500, RHD4CZ2L011RD4100 |  | -158d |
|  | 1086 | **RHD4-02-002-Z2-L011-Storm Network - ST** |  | 2026-09-29 | 2027-01-31 |  |  |  |
|  | 1103 | **RHD4-02-002-L011-(ST)-MH Works - 1200 mm diameter** |  | 2027-01-04 | 2027-01-31 |  |  |  |
| RHD4CZ2L011ST3100 |  | Excavation and PC Blinding works for MH 1200 mm - (RD-L-11)-Z2-L011-ST | 2d | 2027-01-04 | 2027-01-05 | RHD4ENSDZ2APPST110, RHD4ENMSST2000, RHD4ENMSST2010, RHD4CZ2C082ST1106, RHD4PRSHLDOSST1001 |  | -186d |
| RHD4CZ2L011ST3200 |  | Installation of Base for MH 1200 mm - (RD-L-11)-Z2-L011-ST | 2d | 2027-01-06 | 2027-01-07 | RHD4PRSHLSTAGST1601, RHD4CZ2L011ST3100 |  | -186d |
| RHD4CZ2L011ST3300 |  | MH Ring and C.Slab works and Backfilling works for MH 1200 mm - (RD-L-11)-Z2-L011-ST | 2d | 2027-01-09 | 2027-01-10 | RHD4PRSHLDOSST1601, RHD4CZ2L011ST3200 |  | -186d |
| RHD4CZ2L011ST3400 |  | Steel Cover for MH 1200 mm - (RD-L-11)-Z2-L011-ST | 2d | 2027-01-27 | 2027-01-28 | RHD4PRSHLDOSST1701, RHD4PRSHLSTAGST1701, RHD4CZ2L011ST2500, RHD4CZ2L011ST1500, RHD4CZ2L011ST3300 |  | -186d |
| RHD4CZ2L011ST3500 |  | Finishing, Benching, Testing works for MH 1200 mm - (RD-L-11)-Z2-L011-ST | 2d | 2027-01-30 | 2027-01-31 | RHD4CZ2L011ST3400 |  | -186d |
|  | 1087 | **RHD4-02-002-L011-(ST)-GRP Pipes - 400 mm diameter** |  | 2026-09-29 | 2027-01-24 |  |  |  |
| RHD4CZ2L011ST1100 |  | Excavation works for GRP Pipe Line 400 mm - (RD-L-11)-Z2-L011-ST | 2d | 2026-09-29 A | 2027-01-14 | RHD4ENSDZ2APPST110, RHD4CZ2L011ST3300 SS | 50% | -186d |
| RHD4CZ2L011ST1200 |  | Bedding works for GRP Pipe Line 400 mm - (RD-L-11)-Z2-L011-ST | 2d | 2027-01-16 | 2027-01-17 | RHD4CZ2L011ST1100 |  | -184d |
| RHD4CZ2L011ST1300 |  | Installing for GRP Pipe Line 400 mm - (RD-L-11)-Z2-L011-ST | 2d | 2027-01-18 | 2027-01-19 | RHD4PRSHLSTAGST1001, RHD4CZ2L011ST1200, RHD4PRSHLPOST1000, RHD4PRSHLDOSST1001 |  | -184d |
| RHD4CZ2L011ST1400 |  | Primary Test for GRP Pipe Line 400 mm - (RD-L-11)-Z2-L011-ST | 2d | 2027-01-20 | 2027-01-21 | RHD4CZ2L011ST1300 |  | -184d |
| RHD4CZ2L011ST1500 |  | Backfilling and warning tape works for GRP Pipe Line 400 mm - (RD-L-11)-Z2-L011-ST | 2d | 2027-01-23 | 2027-01-24 | RHD4CZ2L011ST1400 |  | -184d |
|  | 1101 | **RHD4-02-002-L011-(ST)-UPVC Pipes - 300 mm diameter** |  | 2026-10-17 | 2027-01-26 |  |  |  |
| RHD4CZ2L011ST2100 |  | Excavation works for UPVC Pipe Line 300 mm - (RD-L-11)-Z2-L011-ST | 2d | 2026-10-17 A | 2027-01-17 | RHD4ENSDZ2APPST110, RHD4CZ2L011ST1100 | 90% | -186d |
| RHD4CZ2L011ST2200 |  | Bedding works for UPVC Pipe Line 300 mm - (RD-L-11)-Z2-L011-ST | 2d | 2027-01-18 | 2027-01-19 | RHD4CZ2L011ST2100 |  | -186d |
| RHD4CZ2L011ST2300 |  | Installing for UPVC Pipe Line 300 mm - (RD-L-11)-Z2-L011-ST | 2d | 2027-01-20 | 2027-01-21 | RHD4PRSHLDOSST1101, RHD4PRSHLSTAGST1101, RHD4CZ2L011ST2200 |  | -186d |
| RHD4CZ2L011ST2400 |  | Primary Test for UPVC Pipe Line 300 mm - (RD-L-11)-Z2-L011-ST | 2d | 2027-01-23 | 2027-01-24 | RHD4CZ2L011ST2300 |  | -186d |
| RHD4CZ2L011ST2500 |  | Backfilling and warning tape works for UPVC Pipe Line 300 mm - (RD-L-11)-Z2-L011-ST | 2d | 2027-01-25 | 2027-01-26 | RHD4CZ2L011ST2400 |  | -186d |
|  | 1109 | **RHD4-02-002-L011-(ST)-Concrete Encasement** |  |  |  |  |  |  |
|  | 1110 | **RHD4-02-002-Z2-L011-Catch Basin - ST** |  | 2027-01-11 | 2027-01-21 |  |  |  |
|  | 1111 | **RHD4-02-002-L011-(ST)-Single Catch Basin Works** |  | 2027-01-11 | 2027-01-21 |  |  |  |
| RHD4CZ2L011ST7100 |  | Excavation works for Single Catch Basin - (RD-L-11)-Z2-L011-ST | 2d | 2027-01-11 | 2027-01-12 | RHD4ENSDZ2APPST110, RHD4CZ2L011ST3300, RHD4CZ2L011ST3300 SS |  | -148d |
| RHD4CZ2L011ST7200 |  | PC Blinding, Installation and Pipe connection for Single Catch Basin - (RD-L-11)-Z2-L011-ST | 2d | 2027-01-13 | 2027-01-14 | RHD4CZ2L011ST7100 |  | -148d |
| RHD4CZ2L011ST7300 |  | Rings & C.Slab & Final Backfill for Single Catch Basin - (RD-L-11)-Z2-L011-ST | 2d | 2027-01-16 | 2027-01-17 | RHD4PRSHLDOSST1301, RHD4PRSHLSTAGST1301, RHD4CZ2L011ST7200 |  | -148d |
| RHD4CZ2L011ST7400 |  | Steel Cover for Single Catch Basin - (RD-L-11)-Z2-L011-ST | 2d | 2027-01-18 | 2027-01-19 | RHD4PRSHLDOSST1701, RHD4CZ2L011ST7300 |  | -148d |
| RHD4CZ2L011ST7500 |  | Finishing and Insulation works for Single Catch Basin - (RD-L-11)-Z2-L011-ST | 2d | 2027-01-20 | 2027-01-21 | RHD4CZ2L011ST7400 |  | -148d |
|  | 1172 | **RHD4-02-002-Z2-L011-Potable Network - PT** |  | 2027-02-01 | 2027-03-18 |  |  |  |
|  | 1175 | **RHD4-02-002-L011-(PT)-HDPE Pipes - 200 mm diameter** |  |  |  |  |  |  |
|  | 1174 | **RHD4-02-002-L011-(PT)-HDPE Pipes - 160 mm diameter** |  | 2027-02-01 | 2027-02-11 |  |  |  |
| RHD4CZ2L011PT1101 |  | Excavation works for HDPE Pipline 160 mm - (RD-L-11)-Z2-L011-PT | 2d | 2027-02-01 | 2027-02-02 | RHD4ENSDZ2APPPT130, RHD4ENMSPT2000, RHD4CZ2L011ST2500, RHD4CZ2L011ST3500 |  | -186d |
| RHD4CZ2L011PT1201 |  | Bedding works for HDPE Pipline 160 mm - (RD-L-11)-Z2-L011-PT | 2d | 2027-02-03 | 2027-02-04 | RHD4CZ2L011PT1101 |  | -186d |
| RHD4CZ2L011PT1301 |  | Installing for HDPE Pipline 160 mm - (RD-L-11)-Z2-L011-PT | 2d | 2027-02-06 | 2027-02-07 | RHD4PRSHLDOSPT1000, RHD4CZ3L122ST1507, RHD4PRSHLSTAGPT1000, RHD4CZ2L011PT1201 |  | -186d |
| RHD4CZ2L011PT1401 |  | Primary Test for HDPE Pipline 160 mm - (RD-L-11)-Z2-L011-PT | 2d | 2027-02-08 | 2027-02-09 | RHD4CZ2L011PT1301 |  | -186d |
| RHD4CZ2L011PT1501 |  | Backfilling and warning tape works for HDPE Pipline 160 mm - (RD-L-11)-Z2-L011-PT | 2d | 2027-02-10 | 2027-02-11 | RHD4CZ2L011PT1401 |  | -186d |
|  | 1178 | **RHD4-02-002-L011-(PT)-Gate Valves (Direct Buried)** |  | 2027-02-13 | 2027-02-16 |  |  |  |
| RHD4CZ2L011PT3100 |  | Installation for Direct Buried Gate Valves - (RD-L-11)-Z2-L011-PT | 2d | 2027-02-13 | 2027-02-14 | RHD4PRSHLDOSPT1200, RHD4PRSHLSTAGPT1200, RHD4CZ2L011PT1301 SS, RHD4CZ2L011PT1301, RHD4CZ2L011PT1501 |  | -186d |
| RHD4CZ2L011PT3200 |  | Stem and Service box for Direct Buried Gate Valves - (RD-L-11)-Z2-L011-PT | 2d | 2027-02-15 | 2027-02-16 | RHD4PRSHLDOSPT1300, RHD4PRSHLSTAGPT1300, RHD4CZ2L011PT3100, RHD4CZ2L011PT1501, RHD4CZ2L011PT1401 |  | -186d |
|  | 1183 | **RHD4-02-002-L011-(PT)-Air Valve Chambers** |  | 2027-02-17 | 2027-02-27 |  |  |  |
| RHD4CZ2L011PT2102 |  | Excavation and Bedding for Air Valve Chambers for Potable Water Network - (RD-L-11)-Z2-L011-PT | 2d | 2027-02-17 | 2027-02-18 | RHD4ENSDZ2APPPT130, RHD4CZ2L011PT1101, RHD4CZ2L011PT3200 |  | -186d |
| RHD4CZ2L011PT2202 |  | PC works for Air Valve Chambers for Potable Water Network - (RD-L-11)-Z2-L011-PT | 2d | 2027-02-20 | 2027-02-21 | RHD4CZ2L011PT2102 |  | -186d |
| RHD4CZ2L011PT2302 |  | Installation for Air Valve Chambers for Potable Water Network - (RD-L-11)-Z2-L011-PT | 2d | 2027-02-23 | 2027-02-24 | RHD4PRSHLDOSPT1100, RHD4PRSHLDOSPT1400, RHD4PRSHLSTAGPT1100, RHD4PRSHLSTAGPT1400, RHD4CZ2L011PT2202, RHD4CZ2L011PT3200 |  | -186d |
| RHD4CZ2L011PT2402 |  | Backfilling works for Air Valve Chambers for Potable Water Network - (RD-L-11)-Z2-L011-PT | 2d | 2027-02-25 | 2027-02-27 | RHD4CZ2L011PT2302 |  | -186d |
|  | 1184 | **RHD4-02-002-L011-(PT)-Air Valves** |  | 2027-02-28 | 2027-03-03 |  |  |  |
| RHD4CZ2L011PT3103 |  | Installation for Air Valves for Potable Water Network - (RD-L-11)-Z2-L011-PT | 2d | 2027-02-28 | 2027-03-01 | RHD4PRSHLDOSPT1200, RHD4PRSHLSTAGPT1200, RHD4CZ2L011PT2302, RHD4CZ2L011PT2402 |  | -186d |
| RHD4CZ2L011PT3203 |  | Stem and Service box for Air Valves for Potable Water Network - (RD-L-11)-Z2-L011-PT | 2d | 2027-03-02 | 2027-03-03 | RHD4PRSHLDOSPT1300, RHD4PRSHLSTAGPT1300, RHD4CZ2L011PT3103, RHD4CZ2L011PT2402 |  | -186d |
|  | 1185 | **RHD4-02-002-L011-(PT)-Fire Hydrant** |  | 2027-03-04 | 2027-03-18 |  |  |  |
| RHD4CZ2L011PT4100 |  | Excavation and Bedding and Pipe Installation for Fire Hydrant - (RD-L-11)-Z2-L011-PT | 2d | 2027-03-04 | 2027-03-06 | RHD4ENSDZ2APPPT130, RHD4CZ2L011PT1401, RHD4CZ2L011PT3203 |  | -186d |
| RHD4CZ2L011PT4200 |  | Valve Installation for Fire Hydrant - (RD-L-11)-Z2-L011-PT | 2d | 2027-03-07 | 2027-03-08 | RHD4CZ2L011PT4100 |  | -186d |
| RHD4CZ2L011PT4300 |  | Stem for Fire Hydrant - (RD-L-11)-Z2-L011-PT | 2d | 2027-03-13 | 2027-03-14 | RHD4CZ2L011PT4200 |  | -186d |
| RHD4CZ2L011PT4400 |  | Fire Installation for Fire Hydrant - (RD-L-11)-Z2-L011-PT | 2d | 2027-03-15 | 2027-03-16 | RHD4PRSHLDOSPT1500, RHD4PRSHLSTAGPT1500, RHD4CZ2L011PT4300 |  | -186d |
| RHD4CZ2L011PT4500 |  | Protection Barriers for Fire Hydrant - (RD-L-11)-Z2-L011-PT | 2d | 2027-03-17 | 2027-03-18 | RHD4CZ2L011PT4400 |  | -186d |
|  | 1186 | **RHD4-02-002-L011-(PT)-Concrete Encasement** |  |  |  |  |  |  |
|  | 1221 | **RHD4-02-002-Z2-L011-Medium Voltage Network - MV** |  | 2027-02-28 | 2027-05-06 |  |  |  |
|  | 1222 | **RHD4-02-002-L011-(MV)-Medium Voltage cable trench** |  | 2027-04-03 | 2027-04-19 |  |  |  |
| RHD4CZ2L011MV1100 |  | Excavation for Medium Voltage Trench - (RD-L-11)-Z2-L011-MV | 4d | 2027-04-03 | 2027-04-06 | RHD4ENSDZ2APPMV150, RHD4CZ2L011RD3100, RHD4CZ2L011PT4500 |  | -198d |
| RHD4CZ2L011MV1200 |  | Trench Backfilling for Medium Voltage Network - (RD-L-11)-Z2-L011-MV | 4d | 2027-04-15 | 2027-04-19 | RHD4CZ2L011MV3200 |  | -198d |
|  | 1223 | **RHD4-02-002-L011-(MV)-Medium Voltage duct banks** |  | 2027-02-28 | 2027-03-08 |  |  |  |
| RHD4CZ2L011MV2100 |  | Excavation of Duct Banks for Medium Voltage Network - (RD-L-11)-Z2-L011-MV | 2d | 2027-02-28 | 2027-03-01 | RHD4ENSDZ2APPMV150, RHD4CZ2L011PT2402 |  | -176d |
| RHD4CZ2L011MV2200 |  | Installation of Duct Banks for Medium Voltage Network - (RD-L-11)-Z2-L011-MV | 2d | 2027-03-02 | 2027-03-03 | RHD4PRSHLDOSMV1000, RHD4PRSHLSTAGMV1000, RHD4CZ2L011MV2100 |  | -176d |
| RHD4CZ2L011MV2300 |  | Pouring of Duct Banks for Medium Voltage Network - (RD-L-11)-Z2-L011-MV | 2d | 2027-03-04 | 2027-03-06 | RHD4CZ2L011MV2200 |  | -176d |
| RHD4CZ2L011MV2400 |  | Backfilling of Duct Banks for Medium Voltage Network - (RD-L-11)-Z2-L011-MV | 2d | 2027-03-07 | 2027-03-08 | RHD4CZ2L011MV2300 |  | -176d |
|  | 1224 | **RHD4-02-002-L011-(MV)-Medium Voltage cables 3Cx 500 mm²** |  | 2027-04-07 | 2027-04-21 |  |  |  |
| RHD4CZ2L011MV3100 |  | Installation of Medium Voltage Cables 3Cx 500 mm² - (RD-L-11)-Z2-L011-MV | 5d | 2027-04-07 | 2027-04-12 | RHD4PRSHLDOSMV1100, RHD4ENMSMV2000, RHD4ENMSMV2010, RHD4PRSHLSTAGMV1100, RHD4CZ2L011MV1100, RHD4CZ2L011MV2400 |  | -198d |
| RHD4CZ2L011MV3200 |  | Joints Installation of Medium Voltage Cables 3Cx 500 mm² - (RD-L-11)-Z2-L011-MV | 2d | 2027-04-13 | 2027-04-14 | RHD4PRSHLDOSMV1300, RHD4PRSHLSTAGMV1300, RHD4CZ2L011MV3100 |  | -198d |
| RHD4CZ2L011MV3300 |  | Testing of Medium Voltage Cables 3Cx 500 mm² - (RD-L-11)-Z2-L011-MV | 2d | 2027-04-20 | 2027-04-21 | RHD4CZ2L011MV3200, RHD4CZ2L011MV1200, RHD4CZ2L011MV3100 |  | -198d |

| ID | WBS | Task | Duration | Start | Finish | Predecessors | Total float |
| --- | --- | --- | --- | --- | --- | --- | --- |
|  | 4254 | **RHD4-02-002-L011-(MV)-Unit Substations** |  | 2027-04-22 | 2027-05-06 |  |  |
| RHD4CZ2L011MV5100 |  | Excavation for Unit Substations for Medium Voltage Network - (RD-L-11)-Z2-L011-MV | 2d | 2027-04-22 | 2027-04-24 | RHD4CZ2L011MV3300 | -198d |
| RHD4CZ2L011MV5200 |  | Concrete Base Placement for Unit Substations for Medium Voltage Network - (RD-L-11)-Z2-L011-MV | 2d | 2027-04-25 | 2027-04-26 | RHD4CZ2L011MV5100 | -198d |
| RHD4CZ2L011MV5300 |  | Installation for Fences and doors for Medium Voltage Network - (RD-L-11)-Z2-L011-MV | 5d | 2027-04-27 | 2027-05-02 | RHD4CZ2L011MV5200 | -198d |
| RHD4CZ2L011MV5400 |  | Installation for Unit Substations for Medium Voltage Network - (RD-L-11)-Z2-L011-MV | 4d | 2027-05-03 | 2027-05-06 | RHD4CZ2L011MV5300 | -198d |
|  | 1228 | **RHD4-02-002-Z2-L011-Low Voltage Network - LV** |  | 2027-05-08 | 2027-06-20 |  |  |
|  | 1229 | **RHD4-02-002-L011-(LV)-Low Voltage duct banks** |  | 2027-05-08 | 2027-05-30 |  |  |
| RHD4CZ2L011LV2100 |  | Excavation of Duct Banks for Low Voltage Network - (RD-L-11)-Z2-L011-LV | 4d | 2027-05-08 | 2027-05-11 | RHD4ENSDZ2APPLV160, RHD4CZ2L011PT2402, RHD4CZ2L011MV5400 | -165d |
| RHD4CZ2L011LV2200 |  | Installation of Duct Banks for Low Voltage Network - (RD-L-11)-Z2-L011-LV | 5d | 2027-05-12 | 2027-05-22 | RHD4PRSHLDOSLV1000, RHD4PRSHLSTAGLV1000, RHD4CZ2L011LV2100 | -165d |
| RHD4CZ2L011LV2300 |  | Pouring of Duct Banks for Low Voltage Network - (RD-L-11)-Z2-L011-LV | 4d | 2027-05-23 | 2027-05-26 | RHD4CZ2L011LV2200 | -165d |
| RHD4CZ2L011LV2400 |  | Backfilling of Duct Banks for Low Voltage Network - (RD-L-11)-Z2-L011-LV | 3d | 2027-05-27 | 2027-05-30 | RHD4CZ2L011LV2300 | -115d |
|  | 1230 | **RHD4-02-002-L011-(LV)-Low Voltage Drawpit** |  | 2027-05-27 | 2027-05-31 |  |  |
| RHD4CZ2L011LV5100 |  | Excavation of Drawpit size 900x900x1000mm for Low Voltage Network - (RD-L-11)-Z2-L011-LV | 2d | 2027-05-27 | 2027-05-29 | RHD4ENSDZ2APPLV160, RHD4CZ2L011LV2300, RHD4CZ2L011MV5400 | -165d |
| RHD4CZ2L011LV5200 |  | Installation of Drawpit size 900x900x1000mm for Low Voltage Network - (RD-L-11)-Z2-L011-LV | 2d | 2027-05-30 | 2027-05-31 | RHD4PRSHLDOSLV1400, RHD4PRSHLSTAGLV1400, RHD4CZ2L011LV5100 | -165d |
|  | 1231 | **RHD4-02-002-L011-(LV)-Low Voltage cables** |  | 2027-05-08 | 2027-06-07 |  |  |
| RHD4CZ2L011LV3100 |  | Excavation for Low Voltage Cables for Low Voltage Network - (RD-L-11)-Z2-L011-LV | 3d | 2027-05-08 | 2027-05-10 | RHD4ENSDZ2APPLV160, RHD4CZ2L011MV1200, RHD4CZ2L011MV5400 | -151d |
| RHD4CZ2L011LV3200 |  | Cable Laying of Low Voltage Cables for Low Voltage Network - (RD-L-11)-Z2-L011-LV | 2d | 2027-06-01 | 2027-06-02 | RHD4PRSHLDOSLV1100, RHD4ENMSLV2000, RHD4ENMSLV2010, RHD4PRSHLSTAGLV1100, RHD4CZ2L011LV3100, RHD4CZ2L011LV5200 | -165d |
| RHD4CZ2L011LV3300 |  | Warning tape and Backfill for Low Voltage Cables for Low Voltage Network - (RD-L-11)-Z2-L011-LV | 2d | 2027-06-03 | 2027-06-05 | RHD4CZ2L011LV3200 | -165d |
| RHD4CZ2L011LV3400 |  | Testing of Low Voltage Cables for Low Voltage Network - (RD-L-11)-Z2-L011-LV | 2d | 2027-06-06 | 2027-06-07 | RHD4CZ2L011LV3300 | -165d |
|  | 4259 | **RHD4-02-002-L011-(LV)-Low Voltage Distribution Pillars** |  | 2027-06-08 | 2027-06-20 |  |  |
| RHD4CZ2L011LV4100 |  | Leveling for Distribution Pillars for Low Voltage Network - (RD-L-11)-Z2-L011-LV | 4d | 2027-06-08 | 2027-06-12 | RHD4CZ2L011LV3400 | -111d |
| RHD4CZ2L011LV4200 |  | Lean Concrete for Distribution Pillars for Low Voltage Network - (RD-L-11)-Z2-L011-LV | 3d | 2027-06-13 | 2027-06-15 | RHD4CZ2L011LV4100 | -111d |
| RHD4CZ2L011LV4300 |  | Installation of Distribution Pillars for Low Voltage Network - (RD-L-11)-Z2-L011-LV | 4d | 2027-06-16 | 2027-06-20 | RHD4CZ2L011LV4200, RHD4CZ2L011SL5200 | -111d |
|  | 1234 | **RHD4-02-002-Z2-L011-Street Lighting Network - SL** |  | 2027-05-08 | 2027-06-14 |  |  |
|  | 1235 | **RHD4-02-002-L011-(SL)-Street Lighting duct banks** |  |  |  |  |  |
|  | 1236 | **RHD4-02-002-L011-(SL)-Street Lighting Drawpit** |  | 2027-05-08 | 2027-05-11 |  |  |
| RHD4CZ2L011SL5100 |  | Excavation of Drawpit size 600x600x900mm for Street Lighting Network - (RD-L-11)-Z2-L011-SL | 2d | 2027-05-08 | 2027-05-09 | RHD4ENSDZ2APPSL170, RHD4CZ2L011MV5400 | -157d |
| RHD4CZ2L011SL5200 |  | Installation of Drawpit size 600x600x900mm for Street Lighting Network - (RD-L-11)-Z2-L011-SL | 2d | 2027-05-10 | 2027-05-11 | RHD4PRSHLDOSSL1400, RHD4PRSHLSTAGSL1400, RHD4CZ2L011SL5100 | -157d |
|  | 1237 | **RHD4-02-002-L011-(SL)-Street Lighting cables** |  | 2027-05-19 | 2027-06-09 |  |  |
| RHD4CZ2L011SL3100 |  | Excavation for Street Lighting Cables for Street Lighting Network - (RD-L-11)-Z2-L011-SL | 4d | 2027-05-19 | 2027-05-23 | RHD4ENSDZ2APPSL170, RHD4CZ2L011SL1300, RHD4CZ2L011MV3300 | -158d |
| RHD4CZ2L011SL3200 |  | Cable Laying of Street Lighting Cables for Street Lighting Network - (RD-L-11)-Z2-L011-SL | 3d | 2027-05-24 | 2027-05-26 | RHD4PRSHLDOSSL1100, RHD4ENMSSL2000, RHD4ENMSSL2010, RHD4PRSHLSTAGSL1100, RHD4CZ2L011SL3100 | -158d |
| RHD4CZ2L011SL3300 |  | Warning tape and Backfill for Street Lighting Cables for Street Lighting Network - (RD-L-11)-Z2-L011-SL | 3d | 2027-05-27 | 2027-05-30 | RHD4CZ2L011SL3200 | -158d |
| RHD4CZ2L011SL3400 |  | Testing of Street Lighting Cables for Street Lighting Network - (RD-L-11)-Z2-L011-SL | 2d | 2027-06-08 | 2027-06-09 | RHD4CZ2L011SL3300, RHD4CZ2L011LV3400 | -165d |
|  | 1238 | **RHD4-02-002-L011-(SL)-Street Lighting Poles** |  | 2027-05-08 | 2027-06-14 |  |  |
| RHD4CZ2L011SL1100 |  | Excavation for RC Base for Lighting Poles for Street Lighting Network - (RD-L-11)-Z2-L011-SL | 2d | 2027-05-08 | 2027-05-09 | RHD4ENSDZ2APPSL170, RHD4CZ2L011MV5400 | -158d |
| RHD4CZ2L011SL1200 |  | Installation for RC Base for Lighting Poles for Street Lighting Network - (RD-L-11)-Z2-L011-SL | 2d | 2027-05-10 | 2027-05-11 | RHD4CZ2L011SL1100 | -158d |
| RHD4CZ2L011SL1300 |  | Backfill for RC Base for Lighting Poles for Street Lighting Network - (RD-L-11)-Z2-L011-SL | 2d | 2027-05-12 | 2027-05-13 | RHD4CZ2L011SL1200 | -158d |
| RHD4CZ2L011SL1400 |  | Installation for Lighting Poles for Street Lighting Network - (RD-L-11)-Z2-L011-SL | 2d | 2027-06-10 | 2027-06-12 | RHD4PRSHLDOSSL1200, RHD4ENMSSL2000, RHD4ENMSSL2010, RHD4PRSHLSTAGSL1200, RHD4CZ2L011SL1300, RHD4CZ2L011SL3400 | -165d |
| RHD4CZ2L011SL1500 |  | Luminaire Installation for Lighting Poles for Street Lighting Network - (RD-L-11)-Z2-L011-SL | 2d | 2027-06-13 | 2027-06-14 | RHD4PRSHLDOSSL1300, RHD4PRSHLSTAGSL1300, RHD4CZ2L011SL1400 | -165d |
|  | 1246 | **RHD4-02-002-Z2-L011-Telecommunications Network - TC** |  | 2027-01-27 | 2027-06-19 |  |  |
|  | 1247 | **RHD4-02-002-L011-(TC)-Telecommunications Ducts** |  | 2027-06-10 | 2027-06-19 |  |  |
| RHD4CZ2L011TC2100 |  | Excavation of HDPE Ducts for Telecom Network - (RD-L-11)-Z2-L011-TC | 2d | 2027-06-10 | 2027-06-12 | RHD4ENSDZ2APPTC190, RHD4CZ2L011TC3400, RHD4CZ2L011LV3300, RHD4CZ2L011SL3400 | -158d |
| RHD4CZ2L011TC2200 |  | Installation of HDPE Ducts for Telecom Network - (RD-L-11)-Z2-L011-TC | 3d | 2027-06-13 | 2027-06-15 | RHD4PRSHLDOSTC1000, RHD4PRSHLSTAGTC1000, RHD4CZ2L011TC2100 | -153d |
| RHD4CZ2L011TC2400 |  | Backfilling of HDPE Ducts for Telecom Network - (RD-L-11)-Z2-L011-TC | 2d | 2027-06-17 | 2027-06-19 | RHD4CZ2L011TC2200, RHD4CZ2L011TC5200 | -154d |
|  | 1248 | **RHD4-02-002-L011-(TC)-Telecommunications Manholes** |  | 2027-06-13 | 2027-06-16 |  |  |
| RHD4CZ2L011TC5100 |  | Excavation for Manholes for Telecom Network - (RD-L-11)-Z2-L011-TC | 2d | 2027-06-13 | 2027-06-14 | RHD4ENSDZ2APPTC190, RHD4CZ2L011TC2100 | -154d |
| RHD4CZ2L011TC5200 |  | Installation of Manholes for Telecom Network - (RD-L-11)-Z2-L011-TC | 2d | 2027-06-15 | 2027-06-16 | RHD4PRSHLDOSTC1200, RHD4PRSHLSTAGTC1200, RHD4CZ2L011TC5100, RHD4CZ2L011TC2200 SS | -154d |
|  | 1249 | **RHD4-02-002-L011-(TC)-Telecomminications Road Crossings** |  | 2027-01-27 | 2027-02-04 |  |  |
| RHD4CZ2L011TC3100 |  | Excavation for Road Crossings for Telecom Network - (RD-L-11)-Z2-L011-TC | 2d | 2027-01-27 | 2027-01-28 | RHD4ENSDZ2APPTC190, RHD4CZ2L011ST2500 | -160d |
| RHD4CZ2L011TC3200 |  | Installation of Road Crossings for Telecom Network - (RD-L-11)-Z2-L011-TC | 2d | 2027-01-30 | 2027-01-31 | RHD4PRSHLDOSTC1100, RHD4PRSHLSTAGTC1100, RHD4CZ2L011TC3100 | -160d |
| RHD4CZ2L011TC3300 |  | Pouring of Road Crossings for Telecom Network - (RD-L-11)-Z2-L011-TC | 2d | 2027-02-01 | 2027-02-02 | RHD4CZ2L011TC3200 | -160d |
| RHD4CZ2L011TC3400 |  | Backfilling of Road Crossings for Telecom Network - (RD-L-11)-Z2-L011-TC | 2d | 2027-02-03 | 2027-02-04 | RHD4CZ2L011TC3300 | -160d |
|  | 1250 | **RHD4-02-002-Z2-L011-Information and Communication Technologies - ICT** |  | 2027-01-27 | 2027-06-23 |  |  |
|  | 1251 | **RHD4-02-002-L011-(ICT)-Information and Communication Technologies Ducts** |  | 2027-06-13 | 2027-06-23 |  |  |
| RHD4CZ2L011ICT2100 |  | Excavation of HDPE Ducts for ICT Network - (RD-L-11)-Z2-L011-ICT | 3d | 2027-06-13 | 2027-06-15 | RHD4ENSDZ2APPICT200, RHD4CZ2L011ICT3400, RHD4CZ2L011LV3300, RHD4CZ2L011TC2100 | -158d |
| RHD4CZ2L011ICT2200 |  | Installation of HDPE Ducts for ICT Network - (RD-L-11)-Z2-L011-ICT | 4d | 2027-06-16 | 2027-06-20 | RHD4PRSHLDOSICT1000, RHD4PRSHLSTAGICT1000, RHD4CZ2L011ICT2100 | -158d |
| RHD4CZ2L011ICT2400 |  | Backfilling of HDPE Ducts for ICT Network - (RD-L-11)-Z2-L011-ICT | 3d | 2027-06-21 | 2027-06-23 | RHD4CZ2L011ICT2200, RHD4CZ2L011ICT5200 | -158d |
|  | 1252 | **RHD4-02-002-L011-(ICT)-Information and Communication Technologies Manholes** |  | 2027-06-16 | 2027-06-20 |  |  |
| RHD4CZ2L011ICT5100 |  | Excavation for Manholes for ICT Network - (RD-L-11)-Z2-L011-ICT | 2d | 2027-06-16 | 2027-06-17 | RHD4ENSDZ2APPICT200, RHD4CZ2L011ICT2100 | -158d |
| RHD4CZ2L011ICT5200 |  | Installation of Manholes for ICT Network - (RD-L-11)-Z2-L011-ICT | 2d | 2027-06-19 | 2027-06-20 | RHD4PRSHLDOSICT1200, RHD4PRSHLSTAGICT1200, RHD4CZ2L011ICT5100, RHD4CZ2L011ICT2200 SS | -158d |
|  | 1253 | **RHD4-02-002-L011-(ICT)-Information and Communication Technologies Road Crossings** |  | 2027-01-27 | 2027-02-20 |  |  |
| RHD4CZ2L011ICT3100 |  | Excavation for Road Crossings for ICT Network - (RD-L-11)-Z2-L011-ICT | 2d | 2027-01-27 | 2027-01-28 | RHD4ENSDZ2APPICT200, RHD4CZ2L011ST2500 | -160d |
| RHD4CZ2L011ICT3200 |  | Installation of Road Crossings for ICT Network - (RD-L-11)-Z2-L011-ICT | 2d | 2027-02-14 | 2027-02-15 | RHD4PRSHLDOSICT1100, RHD4PRSHLSTAGICT1100, RHD4CZ2L011ICT3100 | -173d |
| RHD4CZ2L011ICT3300 |  | Pouring of Road Crossings for ICT Network - (RD-L-11)-Z2-L011-ICT | 2d | 2027-02-16 | 2027-02-17 | RHD4CZ2L011ICT3200 | -173d |
| RHD4CZ2L011ICT3400 |  | Backfilling of Road Crossings for ICT Network - (RD-L-11)-Z2-L011-ICT | 2d | 2027-02-18 | 2027-02-20 | RHD4CZ2L011ICT3300 | -173d |
|  | 1241 | **RHD4-02-002-Z2-L011-Landscape Network - LS** |  |  |  |  |  |
|  | 1242 | **RHD4-02-002-L011-(LS)-Landscape Lighting cables** |  |  |  |  |  |
|  | 1243 | **RHD4-02-002-L011-(LS)-Landscape Feeder Pillars** |  |  |  |  |  |
|  | 1244 | **RHD4-02-002-L011-(LS)-Landscape Bollard Poles** |  |  |  |  |  |
|  | 1245 | **RHD4-02-002-L011-(LS)-Landscape Feeder Pillars Earthing** |  |  |  |  |  |

| ID | WBS | Task | Duration | Start | Finish | Predecessors | Complete | Total float |
| --- | --- | --- | --- | --- | --- | --- | --- | --- |
|  | 1254 | **RHD4-02-002-Z2-L011-Security Network - CCTV** |  |  |  |  |  |  |
|  | 1255 | **RHD4-02-002-L011-(CCTV)-Civil Works** |  |  |  |  |  |  |
|  | 1256 | **RHD4-02-002-L011-(CCTV)-CCTV Poles** |  |  |  |  |  |  |
|  | 1257 | **RHD4-02-002-L011-(CCTV)-Camera** |  |  |  |  |  |  |
|  | 1258 | **RHD4-02-002-L011-(CCTV)-Power and Infrastructure** |  |  |  |  |  |  |
|  | 1260 | **RHD4-02-002-L011-(CCTV)-CCTV Panels and Components** |  |  |  |  |  |  |
|  | 704 | **RHD4-02-002-Z2-C082** |  | 2026-10-17 | 2028-03-23 |  |  |  |
|  | 567 | **RHD4-02-002-Z2-C082-Sewage Network - SW** |  | 2027-03-06 | 2027-03-27 |  |  |  |
|  | 577 | **RHD4-02-002-C082-(SW)-MH Works - 1200 mm diameter** |  | 2027-03-06 | 2027-03-20 |  |  |  |
| RHD4CZ2C082SW3100 |  | Excavation and PC Blinding works for MH 1200 mm - (RD-C-8 /2)-Z2-C082-SW | 2d | 2027-03-06 | 2027-03-07 | RHD4CZ2C082ST2300, RHD4CZ2C082ST2500 |  | -148d |
| RHD4CZ2C082SW3200 |  | Installation of Base for MH 1200 mm - (RD-C-8 /2)-Z2-C082-SW | 2d | 2027-03-08 | 2027-03-13 | RHD4CZ2C082SW3100 |  | -148d |
| RHD4CZ2C082SW3300 |  | MH Ring and C.Slab works and Backfilling works for MH 1200 mm - (RD-C-8 /2)-Z2-C082-SW | 2d | 2027-03-14 | 2027-03-15 | RHD4CZ2C082SW3200 |  | -148d |
| RHD4CZ2C082SW3400 |  | Steel Cover for MH 1200 mm - (RD-C-8 /2)-Z2-C082-SW | 2d | 2027-03-16 | 2027-03-17 | RHD4CZ2C082SW3300 |  | -143d |
| RHD4CZ2C082SW3500 |  | Finishing, Benching, Testing works for MH 1200 mm - (RD-C-8 /2)-Z2-C082-SW | 2d | 2027-03-18 | 2027-03-20 | RHD4CZ2C082SW3400, RHD4CZ2C082ST3502 |  | -143d |
|  | 573 | **RHD4-02-002-C082-(SW)-UPVC Pipes - 200 mm diameter** |  | 2027-03-16 | 2027-03-27 |  |  |  |
| RHD4CZ2C082SW2100 |  | Excavation works for UPVC Pipe Line 200 mm - (RD-C-8 /2)-Z2-C082-SW | 2d | 2027-03-16 | 2027-03-17 | RHD4CZ2C082SW3100, RHD4CZ2C082SW3100 FF, RHD4CZ2C082SW3300 |  | -148d |
| RHD4CZ2C082SW2200 |  | Bedding works for UPVC Pipe Line 200 mm - (RD-C-8 /2)-Z2-C082-SW | 2d | 2027-03-18 | 2027-03-20 | RHD4CZ2C082SW2100 |  | -148d |
| RHD4CZ2C082SW2300 |  | Installing for UPVC Pipe Line 200 mm - (RD-C-8 /2)-Z2-C082-SW | 2d | 2027-03-21 | 2027-03-22 | RHD4CZ2C082SW2200 |  | -148d |
| RHD4CZ2C082SW2400 |  | Primary Test for UPVC Pipe Line 200 mm - (RD-C-8 /2)-Z2-C082-SW | 2d | 2027-03-23 | 2027-03-24 | RHD4CZ2C082SW2300 |  | -148d |
| RHD4CZ2C082SW2500 |  | Backfilling and warning tape works for UPVC Pipe Line 200 mm - (RD-C-8 /2)-Z2-C082-SW | 2d | 2027-03-25 | 2027-03-27 | RHD4CZ2C082SW2400 |  | -148d |
|  | 779 | **RHD4-02-002-Z2-C082-Crossings Potable Network - PTCr** |  |  |  |  |  |  |
|  | 782 | **RHD4-02-002-C082-(PTCr)-HDPE Pipes - 200 mm diameter** |  |  |  |  |  |  |
|  | 785 | **RHD4-02-002-C082-(PTCr)-Gate Valves (Direct Buried)** |  |  |  |  |  |  |
|  | 788 | **RHD4-02-002-C082-(PTCr)-Wash out Valve Chambers** |  |  |  |  |  |  |
|  | 789 | **RHD4-02-002-C082-(PTCr)-Wash out Valves** |  |  |  |  |  |  |
|  | 792 | **RHD4-02-002-C082-(PTCr)-Fire Hydrant** |  |  |  |  |  |  |
|  | 826 | **RHD4-02-002-Z2-C082-Crossings Irrigation Network - IRRC** |  |  |  |  |  |  |
|  | 831 | **RHD4-02-002-C082-(IRRC)-HDPE Pipes - 315 mm diameter** |  |  |  |  |  |  |
|  | 827 | **RHD4-02-002-C082-(IRRC)-HDPE Pipes - 160 mm diameter** |  |  |  |  |  |  |
|  | 835 | **RHD4-02-002-C082-(IRRC)-Gate Valves (Direct Buried)** |  |  |  |  |  |  |
|  | 883 | **RHD4-02-002-Z2-C082-Road Works - RD** |  | 2027-01-18 | 2028-03-23 |  |  |  |
|  | 884 | **RHD4-02-002-C082-(RD)-Subgrade** |  | 2027-01-18 | 2027-01-28 |  |  |  |
| RHD4CZ2C082RD1100 |  | Supply, lay and compaction subgrade compacted thickness 300 mm for Roads - (RD-C-8 /2)-Z2-C082-RD | 10d | 2027-01-18 | 2027-01-28 | RHD4ENSDZ2APPEW100, RHD4ENSDZ2APPRD220, RHD4CZ2C082ST1506, RHD4CZ2C082ST3302, RHD4CZ2C082ST7300 |  | -134d |
|  | 885 | **RHD4-02-002-C082-(RD)-Aggregate Base Course** |  | 2027-01-30 | 2027-02-06 |  |  |  |
| RHD4CZ2C082RD2100 |  | Supply, lay and compaction Aggregate base course compacted thickness 300 mmfor Roads - (RD-C-8 /2)-Z2-C082-RD | 7d | 2027-01-30 | 2027-02-06 | RHD4PRSHLDOSRD1000, RHD4PRSHLSTAGRD1000, RHD4CZ2C082RD1100 |  | -134d |
|  | 886 | **RHD4-02-002-C082-(RD)-Bituminous base course Two Layers, including (MC1)&(RC2)** |  | 2027-02-07 | 2027-07-17 |  |  |  |
| RHD4CZ2C082RD3100 |  | Supply, lay and Asphaltic base course including Prime Coat (MC1) for 1st Layer - (RD-C-8 /2)-Z2-C082-RD | 3d | 2027-02-07 | 2027-02-09 | RHD4PRSHLDOSRD1100, RHD4ENMSASPH2000, RHD4ENMSASPH2010, RHD4PRSHLSTAGRD1100, RHD4CZ2C082RD2100 |  | -134d |
| RHD4CZ2C082RD3200 |  | Supply, lay and Asphaltic base course including Tack Coat (RC2) for 2nd Layer - (RD-C-8 /2)-Z2-C082-RD | 3d | 2027-07-14 | 2027-07-17 | RHD4PRSHLDOSRD1100, RHD4PRSHLSTAGRD1100, RHD4CZ2C082RD3100, RHD4CZ2C082CCTV6100 |  | -134d |
|  | 888 | **RHD4-02-002-C082-(RD)-Precast Concrete Curb** |  | 2027-07-18 | 2027-07-24 |  |  |  |
| RHD4CZ2C082RD5100 |  | Supply and installation Precast Concrete Kerb for Roads - (RD-C-8 /2)-Z2-C082-RD | 6d | 2027-07-18 | 2027-07-24 | RHD4PRSHLDOSRD1200, RHD4ENMSRD2000, RHD4ENMSRD2010, RHD4PRSHLSTAGRD1200, RHD4CZ2C082RD3200 |  | -134d |
|  | 891 | **RHD4-02-002-C082-(RD)-Traffic Signage** |  | 2027-07-25 | 2027-07-31 |  |  |  |
| RHD4CZ2C082RD8100 |  | Installation of Traffic Signage for Road Network - (RD-C-8 /2)-Z2-C082-RD | 6d | 2027-07-25 | 2027-07-31 | RHD4PRSHLDOSRD1600, RHD4PRSHLSTAGRD1600, RHD4CZ2C082RD5100, RHD4CZ2C082TC2400, RHD4CZ2C082ICT2400, RHD4CZ2C082TC5200, RHD4CZ2L011RD8100 |  | -134d |
|  | 889 | **RHD4-02-002-C082-(RD)-Precast Interlocking Block Pavers** |  |  |  |  |  |  |
|  | 887 | **RHD4-02-002-C082-(RD)-Bituminous concrete wearing course including tack coat (RC2)** |  | 2028-03-13 | 2028-03-15 |  |  |  |
| RHD4CZ2C082RD4100 |  | Supply, lay and compaction Asphaltic wearing course including tack Coat (RC2)for Road Network - (RD-C-8 /2)-Z2-C082-RD | 2d | 2028-03-13 | 2028-03-15 | RHD4CZ2C082RD5100, RHD4CZ2L102RD4100 |  | -177.02d |
|  | 890 | **RHD4-02-002-C082-(RD)-Pavement Marking** |  | 2028-03-15 | 2028-03-23 |  |  |  |
| RHD4CZ2C082RD7100 |  | Pavement Markings for Road Network - (RD-C-8 /2)-Z2-C082-RD | 7d | 2028-03-15 | 2028-03-23 | RHD4PRSHLDOSRD1500, RHD4PRSHLSTAGRD1500, RHD4CZ2C082RD4100 |  | -177.02d |
|  | 708 | **RHD4-02-002-Z2-C082-Storm Network - ST** |  | 2026-10-17 | 2027-03-20 |  |  |  |
|  | 6213 | **RHD4-02-002-C082-(ST)-MH Works - 2000 mm diameter** |  | 2027-01-11 | 2027-01-21 |  |  |  |
| RHD4CZ2C082ST3102 |  | Excavation and PC Blinding works for MH 2000 mm - (RD-C-8 /2)-Z2-C082-ST | 2d | 2027-01-11 | 2027-01-12 | RHD4CZ2C082ST3101 |  | -134d |
| RHD4CZ2C082ST3202 |  | Installation of Base for MH 2000 mm - (RD-C-8 /2)-Z2-C082-ST | 2d | 2027-01-13 | 2027-01-14 | RHD4CZ2C082ST3102 |  | -134d |
| RHD4CZ2C082ST3302 |  | MH Ring and C.Slab works and Backfilling works for MH 2000 mm - (RD-C-8 /2)-Z2-C082-ST | 2d | 2027-01-16 | 2027-01-17 | RHD4CZ2C082ST3202 |  | -134d |
| RHD4CZ2C082ST3402 |  | Steel Cover for MH 2000 mm - (RD-C-8 /2)-Z2-C082-ST | 2d | 2027-01-18 | 2027-01-19 | RHD4CZ2C082ST3302 |  | -130d |
| RHD4CZ2C082ST3502 |  | Finishing, Benching, Testing works for MH 2000 mm - (RD-C-8 /2)-Z2-C082-ST | 2d | 2027-01-20 | 2027-01-21 | RHD4CZ2C082ST3402 |  | -130d |
|  | 525 | **RHD4-02-002-C082-(ST)-GRP Pipes - 1000 mm diameter** |  | 2026-10-24 | 2027-01-12 |  |  |  |
| RHD4CZ2C082ST1106 |  | Excavation works for GRP Pipe Line 1000 mm - (RD-C-8 /2)-Z2-C082-ST | 2d | 2026-10-24 A | 2027-01-03 | RHD4PRSHLDOSST1301 | 53% | -186d |
| RHD4CZ2C082ST1206 |  | Bedding works for GRP Pipe Line 1000 mm - (RD-C-8 /2)-Z2-C082-ST | 2d | 2027-01-04 | 2027-01-05 | RHD4CZ2C082ST1106 |  | -130d |
| RHD4CZ2C082ST1306 |  | Installing for GRP Pipe Line 1000 mm - (RD-C-8 /2)-Z2-C082-ST | 2d | 2027-01-06 | 2027-01-07 | RHD4CZ2C082ST1206 |  | -130d |
| RHD4CZ2C082ST1406 |  | Primary Test for GRP Pipe Line 1000 mm - (RD-C-8 /2)-Z2-C082-ST | 2d | 2027-01-09 | 2027-01-10 | RHD4CZ2C082ST1306 |  | -130d |
| RHD4CZ2C082ST1506 |  | Backfilling and warning tape works for GRP Pipe Line 1000 mm - (RD-C-8 /2)-Z2-C082-ST | 2d | 2027-01-11 | 2027-01-12 | RHD4CZ2C082ST1406 |  | -130d |
|  | 725 | **RHD4-02-002-C082-(ST)-MH Works - 1200 mm diameter** |  | 2026-10-17 | 2027-03-17 |  |  |  |
| RHD4CZ2C082ST3100 |  | Excavation and PC Blinding works for MH 1200 mm - (RD-C-8 /2)-Z2-C082-ST | 4d | 2026-10-17 A | 2027-01-07 | RHD4ENSDZ2APPST110, RHD4ENMSST2000, RHD4ENMSST2010, RHD4CZ2C082ST1106 | 40% | -135d |
| RHD4CZ2C082ST3200 |  | Installation of Base for MH 1200 mm - (RD-C-8 /2)-Z2-C082-ST | 4d | 2027-01-09 | 2027-01-12 | RHD4PRSHLSTAGST1601, RHD4CZ2C082ST3100 |  | -135d |
| RHD4CZ2C082ST3300 |  | MH Ring and C.Slab works and Backfilling works for MH 1200 mm - (RD-C-8 /2)-Z2-C082-ST | 4d | 2027-01-13 | 2027-01-17 | RHD4PRSHLDOSST1601, RHD4CZ2C082ST3200 |  | -135d |
| RHD4CZ2C082ST3400 |  | Steel Cover for MH 1200 mm - (RD-C-8 /2)-Z2-C082-ST | 4d | 2027-03-06 | 2027-03-13 | RHD4PRSHLDOSST1701, RHD4PRSHLSTAGST1701, RHD4CZ2C082ST3300, RHD4CZ2C082ST2500, RHD4CZ2C082ST1500 |  | -143d |
| RHD4CZ2C082ST3500 |  | Finishing, Benching, Testing works for MH 1200 mm - (RD-C-8 /2)-Z2-C082-ST | 4d | 2027-03-14 | 2027-03-17 | RHD4CZ2C082ST3400 |  | -143d |
|  | 726 | **RHD4-02-002-C082-(ST)-MH Works - 1500 mm diameter** |  | 2027-01-09 | 2027-03-20 |  |  |  |
| RHD4CZ2C082ST3101 |  | Excavation and PC Blinding works for MH 1500 mm - (RD-C-8 /2)-Z2-C082-ST | 2d | 2027-01-09 | 2027-01-10 | RHD4ENSDZ2APPST110, RHD4ENMSST2000, RHD4CZ2C082ST3100 |  | -134d |
| RHD4CZ2C082ST3201 |  | Installation of Base for MH 1500 mm - (RD-C-8 /2)-Z2-C082-ST | 2d | 2027-01-13 | 2027-01-14 | RHD4PRSHLSTAGST1601, RHD4CZ2C082ST3101, RHD4CZ2C082ST3200 |  | -133d |
| RHD4CZ2C082ST3301 |  | MH Ring and C.Slab works and Backfilling works for MH 1500 mm - (RD-C-8 /2)-Z2-C082-ST | 2d | 2027-01-18 | 2027-01-19 | RHD4PRSHLDOSST1601, RHD4CZ2C082ST3201, RHD4CZ2C082ST3300 |  | -135d |

| ID | WBS | Task | Duration | Start | Finish | Predecessors | Complete | Total float |
| --- | --- | --- | --- | --- | --- | --- | --- | --- |
| RHD4CZ2C082ST3401 |  | Steel Cover for MH 1500 mm - (RD-C-8 /2)-Z2-C082-ST | 2d | 2027-03-14 | 2027-03-15 | RHD4PRSHLDOSST1701, RHD4PRSHLSTAGST1701, RHD4CZ2C082ST3301, RHD4CZ2C082ST1500, RHD4CZ2C082ST3400 |  | -141d |
| RHD4CZ2C082ST3501 |  | Finishing, Benching, Testing works for MH 1500 mm - (RD-C-8 /2)-Z2-C082-ST | 2d | 2027-03-18 | 2027-03-20 | RHD4CZ2C082ST3401, RHD4CZ2C082ST2500, RHD4CZ2C082ST3500 |  | -143d |
|  | 712 | **RHD4-02-002-C082-(ST)-GRP Pipes - 700 mm diameter** |  | 2027-01-04 | 2027-01-14 |  |  |  |
| RHD4CZ2C082ST1103 |  | Excavation works for GRP Pipe Line 700 mm - (RD-C-8 /2)-Z2-C082-ST | 2d | 2027-01-04 | 2027-01-05 | RHD4ENSDZ2APPST110, RHD4CZ2C082ST1106 |  | -148d |
| RHD4CZ2C082ST1203 |  | Bedding works for GRP Pipe Line 700 mm - (RD-C-8 /2)-Z2-C082-ST | 2d | 2027-01-06 | 2027-01-07 | RHD4CZ2C082ST1103 |  | -148d |
| RHD4CZ2C082ST1303 |  | Installing for GRP Pipe Line 700 mm - (RD-C-8 /2)-Z2-C082-ST | 2d | 2027-01-09 | 2027-01-10 | RHD4PRSHLSTAGST1001, RHD4CZ2C082ST1203, RHD4PRSHLPOST1000, RHD4PRSHLDOSST1001 |  | -148d |
| RHD4CZ2C082ST1403 |  | Primary Test for GRP Pipe Line 700 mm - (RD-C-8 /2)-Z2-C082-ST | 2d | 2027-01-11 | 2027-01-12 | RHD4CZ2C082ST1303 |  | -148d |
| RHD4CZ2C082ST1503 |  | Backfilling and warning tape works for GRP Pipe Line 700 mm - (RD-C-8 /2)-Z2-C082-ST | 2d | 2027-01-13 | 2027-01-14 | RHD4CZ2C082ST1403 |  | -148d |
|  | 711 | **RHD4-02-002-C082-(ST)-GRP Pipes - 600 mm diameter** |  | 2026-10-17 | 2027-01-26 |  |  |  |
| RHD4CZ2C082ST1102 |  | Excavation works for GRP Pipe Line 600 mm - (RD-C-8 /2)-Z2-C082-ST | 2d | 2026-10-17 A | 2027-01-17 | RHD4ENSDZ2APPST110, RHD4CZ2C082ST1103, RHD4CZ2C082ST1503 | 24% | -148d |
| RHD4CZ2C082ST1202 |  | Bedding works for GRP Pipe Line 600 mm - (RD-C-8 /2)-Z2-C082-ST | 2d | 2026-11-01 A | 2027-01-19 | RHD4CZ2C082ST1102 | 24% | -148d |
| RHD4CZ2C082ST1302 |  | Installing for GRP Pipe Line 600 mm - (RD-C-8 /2)-Z2-C082-ST | 2d | 2026-11-03 A | 2027-01-21 | RHD4PRSHLSTAGST1001, RHD4CZ2C082ST1202, RHD4CZ2C082ST1303, RHD4PRSHLPOST1000, RHD4PRSHLDOSST1001 | 24% | -148d |
| RHD4CZ2C082ST1402 |  | Primary Test for GRP Pipe Line 600 mm - (RD-C-8 /2)-Z2-C082-ST | 2d | 2027-01-23 | 2027-01-24 | RHD4CZ2C082ST1302 |  | -148d |
| RHD4CZ2C082ST1502 |  | Backfilling and warning tape works for GRP Pipe Line 600 mm - (RD-C-8 /2)-Z2-C082-ST | 2d | 2027-01-25 | 2027-01-26 | RHD4CZ2C082ST1402, RHD4CZ2C082ST1503 |  | -148d |
|  | 710 | **RHD4-02-002-C082-(ST)-GRP Pipes - 500 mm diameter** |  | 2027-01-27 | 2027-02-07 |  |  |  |
| RHD4CZ2C082ST1101 |  | Excavation works for GRP Pipe Line 500 mm - (RD-C-8 /2)-Z2-C082-ST | 2d | 2027-01-27 | 2027-01-28 | RHD4ENSDZ2APPST110, RHD4CZ2C082ST1102, RHD4CZ2C082ST1502 |  | -148d |
| RHD4CZ2C082ST1201 |  | Bedding works for GRP Pipe Line 500 mm - (RD-C-8 /2)-Z2-C082-ST | 2d | 2027-01-30 | 2027-01-31 | RHD4CZ2C082ST1101, RHD4CZ2C082ST1202 |  | -148d |
| RHD4CZ2C082ST1301 |  | Installing for GRP Pipe Line 500 mm - (RD-C-8 /2)-Z2-C082-ST | 2d | 2027-02-01 | 2027-02-02 | RHD4PRSHLSTAGST1001, RHD4CZ2C082ST1201, RHD4CZ2C082ST1302, RHD4PRSHLPOST1000, RHD4PRSHLDOSST1001 |  | -148d |
| RHD4CZ2C082ST1401 |  | Primary Test for GRP Pipe Line 500 mm - (RD-C-8 /2)-Z2-C082-ST | 2d | 2027-02-03 | 2027-02-04 | RHD4CZ2C082ST1301 |  | -148d |
| RHD4CZ2C082ST1501 |  | Backfilling and warning tape works for GRP Pipe Line 500 mm - (RD-C-8 /2)-Z2-C082-ST | 2d | 2027-02-06 | 2027-02-07 | RHD4CZ2C082ST1401, RHD4CZ2C082ST1502 |  | -148d |
|  | 709 | **RHD4-02-002-C082-(ST)-GRP Pipes - 400 mm diameter** |  | 2027-02-08 | 2027-02-18 |  |  |  |
| RHD4CZ2C082ST1100 |  | Excavation works for GRP Pipe Line 400 mm - (RD-C-8 /2)-Z2-C082-ST | 2d | 2027-02-08 | 2027-02-09 | RHD4ENSDZ2APPST110, RHD4CZ2C082ST1101, RHD4CZ2C082ST1501 |  | -148d |
| RHD4CZ2C082ST1200 |  | Bedding works for GRP Pipe Line 400 mm - (RD-C-8 /2)-Z2-C082-ST | 2d | 2027-02-10 | 2027-02-11 | RHD4CZ2C082ST1100, RHD4CZ2C082ST1201 |  | -148d |
| RHD4CZ2C082ST1300 |  | Installing for GRP Pipe Line 400 mm - (RD-C-8 /2)-Z2-C082-ST | 2d | 2027-02-13 | 2027-02-14 | RHD4PRSHLSTAGST1001, RHD4CZ2C082ST1200, RHD4CZ2C082ST1301, RHD4PRSHLPOST1000, RHD4PRSHLDOSST1001 |  | -148d |
| RHD4CZ2C082ST1400 |  | Primary Test for GRP Pipe Line 400 mm - (RD-C-8 /2)-Z2-C082-ST | 2d | 2027-02-15 | 2027-02-16 | RHD4CZ2C082ST1300 |  | -148d |
| RHD4CZ2C082ST1500 |  | Backfilling and warning tape works for GRP Pipe Line 400 mm - (RD-C-8 /2)-Z2-C082-ST | 2d | 2027-02-17 | 2027-02-18 | RHD4PRSHLSTAGMV1000, RHD4CZ2C082ST1400, RHD4CZ2C082ST1501 |  | -148d |
|  | 724 | **RHD4-02-002-C082-(ST)-UPVC Pipes - 400 mm diameter** |  |  |  |  |  |  |
|  | 723 | **RHD4-02-002-C082-(ST)-UPVC Pipes - 300 mm diameter** |  | 2027-02-20 | 2027-03-04 |  |  |  |
| RHD4CZ2C082ST2100 |  | Excavation works for UPVC Pipe Line 300 mm - (RD-C-8 /2)-Z2-C082-ST | 2d | 2027-02-20 | 2027-02-21 | RHD4ENSDZ2APPST110, RHD4CZ2C082ST1100, RHD4CZ2C082ST1500 |  | -148d |
| RHD4CZ2C082ST2200 |  | Bedding works for UPVC Pipe Line 300 mm - (RD-C-8 /2)-Z2-C082-ST | 2d | 2027-02-23 | 2027-02-24 | RHD4CZ2C082ST2100 |  | -148d |
| RHD4CZ2C082ST2300 |  | Installing for UPVC Pipe Line 300 mm - (RD-C-8 /2)-Z2-C082-ST | 2d | 2027-02-25 | 2027-02-27 | RHD4PRSHLDOSST1101, RHD4PRSHLSTAGST1101, RHD4CZ2C082ST2200 |  | -148d |
| RHD4CZ2C082ST2400 |  | Primary Test for UPVC Pipe Line 300 mm - (RD-C-8 /2)-Z2-C082-ST | 2d | 2027-02-28 | 2027-03-01 | RHD4CZ2C082ST2300 |  | -148d |
| RHD4CZ2C082ST2500 |  | Backfilling and warning tape works for UPVC Pipe Line 300 mm - (RD-C-8 /2)-Z2-C082-ST | 3d | 2027-03-02 | 2027-03-04 | RHD4CZ2C082ST2400, RHD4CZ2C082ST6100 |  | -148d |
|  | 731 | **RHD4-02-002-C082-(ST)-Concrete Encasement** |  | 2027-02-25 | 2027-02-27 |  |  |  |
| RHD4CZ2C082ST6100 |  | Pipe Encasement for Storm Pipelines - (RD-C-8 /2)-Z2-C082-ST | 2d | 2027-02-25 | 2027-02-27 | RHD4CZ2C082ST2300 SS, RHD4CZ2C082ST2300 FF, RHD4CZ2C082ST2200, RHD4CZ2C082RD3100 |  | -146d |
|  | 732 | **RHD4-02-002-Z2-C082-Catch Basin - ST** |  | 2027-01-04 | 2027-01-31 |  |  |  |
|  | 733 | **RHD4-02-002-C082-(ST)-Single Catch Basin Works** |  | 2027-01-04 | 2027-01-23 |  |  |  |
| RHD4CZ2C082ST7100 |  | Excavation works for Single Catch Basin - (RD-C-8 /2)-Z2-C082-ST | 3d | 2027-01-04 | 2027-01-06 | RHD4ENSDZ2APPST110, RHD4CZ2C082ST1106 |  | -131d |
| RHD4CZ2C082ST7200 |  | PC Blinding, Installation and Pipe connection for Single Catch Basin - (RD-C-8 /2)-Z2-C082-ST | 3d | 2027-01-07 | 2027-01-10 | RHD4CZ2C082ST7100 |  | -131d |
| RHD4CZ2C082ST7300 |  | Rings & C.Slab & Final Backfill for Single Catch Basin - (RD-C-8 /2)-Z2-C082-ST | 3d | 2027-01-11 | 2027-01-13 | RHD4PRSHLDOSST1301, RHD4PRSHLSTAGST1301, RHD4CZ2C082ST7200 |  | -131d |
| RHD4CZ2C082ST7400 |  | Steel Cover for Single Catch Basin - (RD-C-8 /2)-Z2-C082-ST | 3d | 2027-01-14 | 2027-01-17 | RHD4PRSHLDOSST1701, RHD4CZ2C082ST7300 |  | -130d |
| RHD4CZ2C082ST7500 |  | Finishing and Insulation works for Single Catch Basin - (RD-C-8 /2)-Z2-C082-ST | 5d | 2027-01-18 | 2027-01-23 | RHD4CZ2C082ST7400 |  | -130d |
|  | 734 | **RHD4-02-002-C082-(ST)-Double Catch Basin Works** |  | 2027-01-20 | 2027-01-31 |  |  |  |
| RHD4CZ2C082ST8100 |  | Excavation works for Double Catch Basin - (RD-C-8 /2)-Z2-C082-ST | 2d | 2027-01-20 | 2027-01-21 | RHD4ENSDZ2APPST110, RHD4CZ2C082ST3300, RHD4CZ2C082ST3301, RHD4CZ2C082ST7100 |  | -135d |
| RHD4CZ2C082ST8200 |  | PC Blinding, Installation and Pipe connection for Double Catch Basin - (RD-C-8 /2)-Z2-C082-ST | 2d | 2027-01-23 | 2027-01-24 | RHD4CZ2C082ST8100, RHD4CZ2C082ST7200 |  | -135d |
| RHD4CZ2C082ST8300 |  | Rings & C.Slab & Final Backfillfor Double Catch Basin - (RD-C-8 /2)-Z2-C082-ST | 2d | 2027-01-25 | 2027-01-26 | RHD4PRSHLDOSST1301, RHD4PRSHLSTAGST1301, RHD4CZ2C082ST8200, RHD4CZ2C082ST7300 |  | -135d |
| RHD4CZ2C082ST8400 |  | Steel Cover for Double Catch Basin - (RD-C-8 /2)-Z2-C082-ST | 2d | 2027-01-27 | 2027-01-28 | RHD4PRSHLDOSST1701, RHD4CZ2C082ST8300, RHD4CZ2C082ST7400 |  | -135d |
| RHD4CZ2C082ST8500 |  | Finishing and Insulation works for Double Catch Basin - (RD-C-8 /2)-Z2-C082-ST | 2d | 2027-01-30 | 2027-01-31 | RHD4CZ2C082ST8400, RHD4CZ2C082ST7500 |  | -135d |
|  | 705 | **RHD4-02-002-Z2-C082-Concrete Box Culvert - ST** |  | 2027-06-29 | 2027-10-31 |  |  |  |
|  | 706 | **RHD4-02-002-C082-(ST)-Concrete Box Culvert** |  | 2027-06-29 | 2027-10-31 |  |  |  |
| RHD4CZ2C082ST4100 |  | Excavation works for Box Culvert - (RD-C-8 /2)-Z2-C082-ST | 21d | 2027-06-29 | 2027-07-24 | RHD4ENSDZ2APPST110, RHD4ENMSBC2010, RHD4CZ1CH1ST1200 |  | -120.02d |
| RHD4CZ2C082ST4200 |  | PC works for Box Culvert - (RD-C-8 /2)-Z2-C082-ST | 7d | 2027-07-24 | 2027-08-01 | RHD4CZ2C082ST4100 |  | -120.02d |
| RHD4CZ2C082ST4400 |  | Raft works for Box Culvert - (RD-C-8 /2)-Z2-C082-ST | 19d | 2027-08-01 | 2027-08-23 | RHD4PRSHLDOSST1501, RHD4PRSHLSTAGST1501, RHD4CZ2C082ST4200 |  | -120.02d |
| RHD4CZ2C082ST4500 |  | Wall and slab works for Box Culvert - (RD-C-8 /2)-Z2-C082-ST | 19d | 2027-08-23 | 2027-09-14 | RHD4PRSHLDOSST1501, RHD4PRSHLSTAGST1501, RHD4CZ2C082ST4400 |  | -120.02d |
| RHD4CZ2C082ST4700 |  | Backfilling works for Box Culvert - (RD-C-8 /2)-Z2-C082-ST | 17d | 2027-09-21 | 2027-10-12 | RHD4CZ2C082ST4500, RHD4CZ2C082ST5300 |  | -120.02d |
| RHD4CZ2C082ST4600 |  | Insulation and Testing for Box Culvert - (RD-C-8 /2)-Z2-C082-ST | 16d | 2027-10-12 | 2027-10-31 | RHD4CZ2C082ST5400, RHD4CZ2C082ST4700 |  | -120.02d |
|  | 707 | **RHD4-02-002-C082-(ST)-Concrete Chambers** |  | 2027-09-14 | 2027-09-25 |  |  |  |
| RHD4CZ2C082ST5100 |  | Excavation and Bedding for Concrete Chambers - for Box Culvert - (RD-C-8 /2)-Z2-C082-ST | 2d | 2027-09-14 | 2027-09-16 | RHD4ENSDZ2APPST110, RHD4CZ2C082ST4500 |  | -120.02d |
| RHD4CZ2C082ST5200 |  | PC works for Concrete Chambers - for Box Culvert - (RD-C-8 /2)-Z2-C082-ST | 2d | 2027-09-16 | 2027-09-19 | RHD4CZ2C082ST5100 |  | -120.02d |
| RHD4CZ2C082ST5300 |  | Installation for Concrete Chambers - for Box Culvert - (RD-C-8 /2)-Z2-C082-ST | 2d | 2027-09-19 | 2027-09-21 | RHD4CZ2C082ST5200 |  | -120.02d |
| RHD4CZ2C082ST5400 |  | Backfilling works for Concrete Chambers - for Box Culvert - (RD-C-8 /2)-Z2-C082-ST | 2d | 2027-09-21 | 2027-09-25 | RHD4CZ2C082ST5300 |  | -105.02d |
|  | 794 | **RHD4-02-002-Z2-C082-Potable Network - PT** |  | 2027-03-28 | 2027-05-10 |  |  |  |
|  | 797 | **RHD4-02-002-C082-(PT)-HDPE Pipes - 200 mm diameter** |  | 2027-03-28 | 2027-05-05 |  |  |  |
| RHD4CZ2C082PT1102 |  | Excavation works for HDPE Pipline 200 mm - (RD-C-8 /2)-Z2-C082-PT | 5d | 2027-03-28 | 2027-04-01 | RHD4ENSDZ2APPPT130, RHD4ENMSPT2000, RHD4CZ2C082ST2500, RHD4CZ2C082SW2500 |  | -148d |
| RHD4CZ2C082PT1202 |  | Bedding works for HDPE Pipline 200 mm - (RD-C-8 /2)-Z2-C082-PT | 4d | 2027-04-03 | 2027-04-06 | RHD4CZ2C082PT1102 |  | -139d |
| RHD4CZ2C082PT1302 |  | Installing for HDPE Pipline 200 mm - (RD-C-8 /2)-Z2-C082-PT | 7d | 2027-04-07 | 2027-04-14 | RHD4PRSHLDOSPT1000, RHD4PRSHLSTAGPT1000, RHD4CZ2C082PT1202 |  | -139d |
| RHD4CZ2C082PT1402 |  | Primary Test for HDPE Pipline 200 mm - (RD-C-8 /2)-Z2-C082-PT | 3d | 2027-04-26 | 2027-04-28 | RHD4CZ2C082PT1302, RHD4CZ2C082PT5100, RHD4CZ2C082PT3100 |  | -139d |
| RHD4CZ2C082PT1502 |  | Backfilling and warning tape works for HDPE Pipline 200 mm - (RD-C-8 /2)-Z2-C082-PT | 6d | 2027-04-29 | 2027-05-05 | RHD4CZ2C082PT1402, RHD4CZ2C082PT5100 |  | -139d |
|  | 800 | **RHD4-02-002-C082-(PT)-Gate Valves (Direct Buried)** |  | 2027-04-13 | 2027-05-08 |  |  |  |
| RHD4CZ2C082PT3100 |  | Installation for Direct Buried Gate Valves - (RD-C-8 /2)-Z2-C082-PT | 2d | 2027-04-13 | 2027-04-14 | RHD4PRSHLDOSPT1200, RHD4PRSHLSTAGPT1200, RHD4CZ2C082PT1302 FF, RHD4CZ2C082PT1302 SS |  | -130d |

| ID | WBS | Task | Duration | Start | Finish | Predecessors | Total float |
| --- | --- | --- | --- | --- | --- | --- | --- |
| RHD4CZ2C082PT3200 |  | Stem and Service box for Direct Buried Gate Valves - (RD-C-8 /2)-Z2-C082-PT | 2d | 2027-05-06 | 2027-05-08 | RHD4PRSHLDOSPT1300, RHD4PRSHLSTAGPT1300, RHD4CZ2C082PT3100, RHD4CZ2C082PT1502, RHD4CZ2C082PT1302, RHD4CZ2C082PT1402 | -139d |
|  | 808 | **RHD4-02-002-C082-(PT)-Concrete Encasement** |  | 2027-04-07 | 2027-04-25 |  |  |
| RHD4CZ2C082PT5100 |  | Pipe Encasement for Potable Pipelines - (RD-C-8 /2)-Z2-C082-PT | 16d | 2027-04-07 | 2027-04-25 | RHD4CZ2C082PT1302 FF, RHD4CZ2C082PT1302 SS, RHD4CZ2C082PT1202 | -139d |
|  | 803 | **RHD4-02-002-C082-(PT)-Wash out Valve Chambers** |  | 2027-04-03 | 2027-05-10 |  |  |
| RHD4CZ2C082PT2101 |  | Excavation and Bedding for Wash out Valve Chambers for Potable Water Network - (RD-C-8 /2)-Z2-C082-PT | 2d | 2027-04-03 | 2027-04-04 | RHD4ENSDZ2APPPT130, RHD4CZ2C082PT1102 | -114d |
| RHD4CZ2C082PT2201 |  | PC works for Wash out Valve Chambers for Potable Water Network - (RD-C-8 /2)-Z2-C082-PT | 2d | 2027-04-05 | 2027-04-06 | RHD4CZ2C082PT2101 | -114d |
| RHD4CZ2C082PT2301 |  | Installation for Wash out Valve Chambers for Potable Water Network - (RD-C-8 /2)-Z2-C082-PT | 2d | 2027-04-07 | 2027-04-08 | RHD4PRSHLDOSPT1100, RHD4PRSHLDOSPT1400, RHD4PRSHLSTAGPT1100, RHD4PRSHLSTAGPT1400, RHD4CZ2C082PT2201 | -114d |
| RHD4CZ2C082PT2401 |  | Backfilling works for Wash out Valve Chambers for Potable Water Network - (RD-C-8 /2)-Z2-C082-PT | 2d | 2027-05-09 | 2027-05-10 | RHD4CZ2C082PT2301, RHD4CZ2C082PT3200 | -139d |
|  | 804 | **RHD4-02-002-C082-(PT)-Wash out Valves** |  | 2027-04-15 | 2027-04-19 |  |  |
| RHD4CZ2C082PT3102 |  | Installation for Wash out Valves for Potable Water Network - (RD-C-8 /2)-Z2-C082-PT | 2d | 2027-04-15 | 2027-04-17 | RHD4PRSHLDOSPT1200, RHD4PRSHLSTAGPT1200, RHD4CZ2C082PT1302 | -138d |
| RHD4CZ2C082PT3202 |  | Stem and Service box for Wash out Valves for Potable Water Network - (RD-C-8 /2)-Z2-C082-PT | 2d | 2027-04-18 | 2027-04-19 | RHD4PRSHLDOSPT1300, RHD4PRSHLSTAGPT1300, RHD4CZ2C082PT3102 | -138d |
|  | 805 | **RHD4-02-002-C082-(PT)-Air Valve Chambers** |  | 2027-04-03 | 2027-04-11 |  |  |
| RHD4CZ2C082PT2102 |  | Excavation and Bedding for Air Valve Chambers for Potable Water Network - (RD-C-8 /2)-Z2-C082-PT | 2d | 2027-04-03 | 2027-04-04 | RHD4ENSDZ2APPPT130, RHD4CZ2C082PT1102 | -148d |
| RHD4CZ2C082PT2202 |  | PC works for Air Valve Chambers for Potable Water Network - (RD-C-8 /2)-Z2-C082-PT | 2d | 2027-04-05 | 2027-04-06 | RHD4CZ2C082PT2102 | -148d |
| RHD4CZ2C082PT2302 |  | Installation for Air Valve Chambers for Potable Water Network - (RD-C-8 /2)-Z2-C082-PT | 2d | 2027-04-07 | 2027-04-08 | RHD4PRSHLDOSPT1100, RHD4PRSHLDOSPT1400, RHD4PRSHLSTAGPT1100, RHD4PRSHLSTAGPT1400, RHD4CZ2C082PT2202 | -148d |
| RHD4CZ2C082PT2402 |  | Backfilling works for Air Valve Chambers for Potable Water Network - (RD-C-8 /2)-Z2-C082-PT | 2d | 2027-04-10 | 2027-04-11 | RHD4CZ2C082PT2302 | -148d |
|  | 806 | **RHD4-02-002-C082-(PT)-Air Valves** |  | 2027-04-10 | 2027-04-13 |  |  |
| RHD4CZ2C082PT3103 |  | Installation for Air Valves for Potable Water Network - (RD-C-8 /2)-Z2-C082-PT | 2d | 2027-04-10 | 2027-04-11 | RHD4PRSHLDOSPT1200, RHD4PRSHLSTAGPT1200, RHD4CZ2C082PT2302 | -148d |
| RHD4CZ2C082PT3203 |  | Stem and Service box for Air Valves for Potable Water Network - (RD-C-8 /2)-Z2-C082-PT | 2d | 2027-04-12 | 2027-04-13 | RHD4PRSHLDOSPT1300, RHD4PRSHLSTAGPT1300, RHD4CZ2C082PT3103, RHD4CZ2C082PT2402 | -148d |
|  | 807 | **RHD4-02-002-C082-(PT)-Fire Hydrant** |  | 2027-04-15 | 2027-05-02 |  |  |
| RHD4CZ2C082PT4100 |  | Excavation and Bedding and Pipe Installation for Fire Hydrant - (RD-C-8 /2)-Z2-C082-PT | 4d | 2027-04-15 | 2027-04-19 | RHD4ENSDZ2APPPT130, RHD4CZ2C082PT1302 | -134d |
| RHD4CZ2C082PT4200 |  | Valve Installation for Fire Hydrant - (RD-C-8 /2)-Z2-C082-PT | 3d | 2027-04-20 | 2027-04-22 | RHD4CZ2C082PT4100 | -134d |
| RHD4CZ2C082PT4300 |  | Stem for Fire Hydrant - (RD-C-8 /2)-Z2-C082-PT | 3d | 2027-04-24 | 2027-04-26 | RHD4CZ2C082PT4200 | -134d |
| RHD4CZ2C082PT4400 |  | Fire Installation for Fire Hydrant - (RD-C-8 /2)-Z2-C082-PT | 3d | 2027-04-27 | 2027-04-29 | RHD4PRSHLDOSPT1500, RHD4PRSHLSTAGPT1500, RHD4CZ2C082PT4300 | -134d |
| RHD4CZ2C082PT4500 |  | Protection Barriers for Fire Hydrant - (RD-C-8 /2)-Z2-C082-PT | 2d | 2027-05-01 | 2027-05-02 | RHD4CZ2C082PT4400 | -134d |
|  | 809 | **RHD4-02-002-Z2-C082-Irrigation Network - IRR** |  | 2027-04-03 | 2027-05-08 |  |  |
|  | 816 | **RHD4-02-002-C082-(IRR)-HDPE Pipes - 450 mm diameter** |  |  |  |  |  |
|  | 815 | **RHD4-02-002-C082-(IRR)-HDPE Pipes - 400 mm diameter** |  |  |  |  |  |
|  | 814 | **RHD4-02-002-C082-(IRR)-HDPE Pipes - 315 mm diameter** |  | 2027-04-03 | 2027-05-08 |  |  |
| RHD4CZ2C082IRR1104 |  | Excavation works for HDPE Pipline 315 mm - (RD-C-8 /2)-Z2-C082-IRR | 8d | 2027-04-03 | 2027-04-11 | RHD4ENSDZ2APPIRR140, RHD4ENMSRR2000, RHD4CZ2C082PT1102 | -148d |
| RHD4CZ2C082IRR1204 |  | Bedding works for HDPE Pipline 315 mm - (RD-C-8 /2)-Z2-C082-IRR | 6d | 2027-04-12 | 2027-04-18 | RHD4CZ2C082IRR1104 | -148d |
| RHD4CZ2C082IRR1304 |  | Installing for HDPE Pipline 315 mm - (RD-C-8 /2)-Z2-C082-IRR | 8d | 2027-04-19 | 2027-04-27 | RHD4PRSHLDOSIRR1000, RHD4PRSHLSTAGIRR1000, RHD4CZ2C082IRR1204 | -148d |
| RHD4CZ2C082IRR1404 |  | Primary Test for HDPE Pipline 315 mm - (RD-C-8 /2)-Z2-C082-IRR | 3d | 2027-04-28 | 2027-05-01 | RHD4CZ2C082IRR1304, RHD4CZ2C082IRR3100 | -139d |
| RHD4CZ2C082IRR1504 |  | Backfilling and warning tape works for HDPE Pipline 315 mm - (RD-C-8 /2)-Z2-C082-IRR | 6d | 2027-05-02 | 2027-05-08 | RHD4CZ2C082IRR1404 | -139d |
|  | 812 | **RHD4-02-002-C082-(IRR)-HDPE Pipes - 200 mm diameter** |  |  |  |  |  |
|  | 6863 | **RHD4-02-002-C082-(IRR)-HDPE Pipes - 160 mm diameter** |  | 2027-04-12 | 2027-04-22 |  |  |
| RHD4CZ2C082IRR1100 |  | Excavation works for HDPE Pipline 160 mm - (RD-C-8 /2)-Z2-C082-IRR | 2d | 2027-04-12 | 2027-04-13 | RHD4CZ2C082IRR1104 SS, RHD4CZ2C082IRR1104 | -134d |
| RHD4CZ2C082IRR1200 |  | Bedding works for HDPE Pipline 160 mm - (RD-C-8 /2)-Z2-C082-IRR | 2d | 2027-04-14 | 2027-04-15 | RHD4CZ2C082IRR1100 | -134d |
| RHD4CZ2C082IRR1300 |  | Installing for HDPE Pipline 160 mm - (RD-C-8 /2)-Z2-C082-IRR | 2d | 2027-04-17 | 2027-04-18 | RHD4CZ2C082IRR1200 | -134d |
| RHD4CZ2C082IRR1400 |  | Primary Test for HDPE Pipline 160 mm - (RD-C-8 /2)-Z2-C082-IRR | 2d | 2027-04-19 | 2027-04-20 | RHD4CZ2C082IRR1300 | -134d |
| RHD4CZ2C082IRR1500 |  | Backfilling and warning tape works for HDPE Pipline 160 mm - (RD-C-8 /2)-Z2-C082-IRR | 2d | 2027-04-21 | 2027-04-22 | RHD4CZ2C082IRR1400 | -134d |
|  | 818 | **RHD4-02-002-C082-(IRR)-Gate Valves (Direct Buried)** |  | 2027-04-19 | 2027-04-22 |  |  |
| RHD4CZ2C082IRR3100 |  | Installation for Direct Buried Gate Valves - (RD-C-8 /2)-Z2-C082-IRR | 2d | 2027-04-19 | 2027-04-20 | RHD4PRSHLDOSIRR1100, RHD4PRSHLSTAGIRR1100, RHD4CZ2C082IRR1304 SS | -148d |
| RHD4CZ2C082IRR3200 |  | Stem and Service box for Direct Buried Gate Valves - (RD-C-8 /2)-Z2-C082-IRR | 2d | 2027-04-21 | 2027-04-22 | RHD4PRSHLDOSIRR1300, RHD4PRSHLSTAGIRR1300, RHD4CZ2C082IRR3100 | -148d |
|  | 5383 | **RHD4-02-002-Z2-C082-Medium Voltage Network - MV** |  |  |  |  |  |
|  | 5384 | **RHD4-02-002-C082-(MV)-Medium Voltage cable trench** |  |  |  |  |  |
|  | 5386 | **RHD4-02-002-C082-(MV)-Medium Voltage cables 3Cx 500 mm²** |  |  |  |  |  |
|  | 856 | **RHD4-02-002-Z2-C082-Street Lighting Network - SL** |  | 2027-05-09 | 2027-07-07 |  |  |
|  | 857 | **RHD4-02-002-C082-(SL)-Street Lighting duct banks** |  | 2027-05-09 | 2027-05-29 |  |  |
| RHD4CZ2C082SL2100 |  | Excavation of Duct Banks for Street Lighting Network - (RD-C-8 /2)-Z2-C082-SL | 3d | 2027-05-09 | 2027-05-11 | RHD4ENSDZ2APPSL170, RHD4CZ2C082ST1106, RHD4CZ2C082IRR1504 | -139d |
| RHD4CZ2C082SL2200 |  | Installation of Duct Banks for Street Lighting Network - (RD-C-8 /2)-Z2-C082-SL | 5d | 2027-05-12 | 2027-05-22 | RHD4PRSHLDOSSL1000, RHD4PRSHLSTAGSL1000, RHD4CZ2C082SL2100 | -139d |
| RHD4CZ2C082SL2300 |  | Pouring of Duct Banks for Street Lighting Network - (RD-C-8 /2)-Z2-C082-SL | 3d | 2027-05-23 | 2027-05-25 | RHD4CZ2C082SL2200 | -139d |
| RHD4CZ2C082SL2400 |  | Backfilling of Duct Banks for Street Lighting Network - (RD-C-8 /2)-Z2-C082-SL | 3d | 2027-05-26 | 2027-05-29 | RHD4CZ2C082SL2300 | -139d |
|  | 858 | **RHD4-02-002-C082-(SL)-Street Lighting Drawpit** |  | 2027-06-02 | 2027-06-06 |  |  |
| RHD4CZ2C082SL5100 |  | Excavation of Drawpit size 600x600x900mm for Street Lighting Network - (RD-C-8 /2)-Z2-C082-SL | 2d | 2027-06-02 | 2027-06-03 | RHD4ENSDZ2APPSL170, RHD4CZ2C082SL2300, RHD4CZ2C082SL1100 | -95d |
| RHD4CZ2C082SL5200 |  | Installation of Drawpit size 600x600x900mm for Street Lighting Network - (RD-C-8 /2)-Z2-C082-SL | 2d | 2027-06-05 | 2027-06-06 | RHD4PRSHLDOSSL1400, RHD4PRSHLSTAGSL1400, RHD4CZ2C082SL5100, RHD4CZ2C082SW3500 | -95d |
|  | 860 | **RHD4-02-002-C082-(SL)-Street Lighting Poles** |  | 2027-05-30 | 2027-07-07 |  |  |
| RHD4CZ2C082SL1100 |  | Excavation for RC Base for Lighting Poles for Street Lighting Network - (RD-C-8 /2)-Z2-C082-SL | 3d | 2027-05-30 | 2027-06-01 | RHD4ENSDZ2APPSL170, RHD4CZ2C082SL2400, RHD4CZ2C082PT1502, RHD4CZ2C082IRR1504, RHD4CZ2C082IRR1404, RHD4CZ2C082RD3100 | -139d |
| RHD4CZ2C082SL1200 |  | Installation for RC Base for Lighting Poles for Street Lighting Network - (RD-C-8 /2)-Z2-C082-SL | 3d | 2027-06-02 | 2027-06-05 | RHD4CZ2C082SL1100 | -139d |
| RHD4CZ2C082SL1300 |  | Backfill for RC Base for Lighting Poles for Street Lighting Network - (RD-C-8 /2)-Z2-C082-SL | 3d | 2027-06-06 | 2027-06-08 | RHD4CZ2C082SL1200 | -139d |
| RHD4CZ2C082SL1400 |  | Installation for Lighting Poles for Street Lighting Network - (RD-C-8 /2)-Z2-C082-SL | 4d | 2027-06-28 | 2027-07-01 | RHD4PRSHLDOSSL1200, RHD4ENMSSL2000, RHD4ENMSSL2010, RHD4PRSHLSTAGSL1200, RHD4CZ2C082SL1300, RHD4CZ2C082SL3400 | -139d |
| RHD4CZ2C082SL1500 |  | Luminaire Installation for Lighting Poles for Street Lighting Network - (RD-C-8 /2)-Z2-C082-SL | 5d | 2027-07-03 | 2027-07-07 | RHD4PRSHLDOSSL1300, RHD4PRSHLSTAGSL1300, RHD4CZ2C082SL1400 | -139d |
|  | 859 | **RHD4-02-002-C082-(SL)-Street Lighting cables** |  | 2027-06-09 | 2027-06-27 |  |  |
| RHD4CZ2C082SL3100 |  | Excavation for Street Lighting Cables for Street Lighting Network - (RD-C-8 /2)-Z2-C082-SL | 5d | 2027-06-09 | 2027-06-14 | RHD4ENSDZ2APPSL170, RHD4CZ2C082SL1300 | -139d |
| RHD4CZ2C082SL3200 |  | Cable Laying of Street Lighting Cables for Street Lighting Network - (RD-C-8 /2)-Z2-C082-SL | 4d | 2027-06-15 | 2027-06-19 | RHD4PRSHLDOSSL1100, RHD4ENMSSL2000, RHD4ENMSSL2010, RHD4PRSHLSTAGSL1100, RHD4CZ2C082SL3100 | -139d |
| RHD4CZ2C082SL3300 |  | Warning tape and Backfill for Street Lighting Cables for Street Lighting Network - (RD-C-8 /2)-Z2-C082-SL | 4d | 2027-06-20 | 2027-06-23 | RHD4CZ2C082SL3200 | -139d |
| RHD4CZ2C082SL3400 |  | Testing of Street Lighting Cables for Street Lighting Network - (RD-C-8 /2)-Z2-C082-SL | 3d | 2027-06-24 | 2027-06-27 | RHD4CZ2C082SL3300 | -139d |
|  | 862 | **RHD4-02-002-C082-(SL)-Street Lighting Earthing System** |  | 2027-07-03 | 2027-07-04 |  |  |
| RHD4CZ2C082SL6100 |  | Installation of Earthing for Lighting Poles and Fedder Pillers for Street Lighting Network - (RD-C-8 /2)-Z2-C082-SL | 2d | 2027-07-03 | 2027-07-04 | RHD4ENMSER2000, RHD4ENMSER2010, RHD4CZ2C082SL1400, RHD4CZ2C082SL3300 | -121d |
|  | 868 | **RHD4-02-002-Z2-C082-Telecommunications Network - TC** |  | 2027-04-24 | 2027-07-08 |  |  |

| ID | WBS | Task | Duration | Start | Finish | Predecessors | Total float |
| --- | --- | --- | --- | --- | --- | --- | --- |
|  | 869 | **RHD4-02-002-C082-(TC)-Telecommunications Ducts** |  | 2027-04-24 | 2027-05-29 |  |  |
| RHD4CZ2C082TC2100 |  | Excavation of HDPE Ducts for Telecom Network - (RD-C-8 /2)-Z2-C082-TC | 8d | 2027-04-24 | 2027-05-02 | RHD4ENSDZ2APPTC190, RHD4CZ2C082IRR1500 | -134d |
| RHD4CZ2C082TC2200 |  | Installation of HDPE Ducts for Telecom Network - (RD-C-8 /2)-Z2-C082-TC | 11d | 2027-05-03 | 2027-05-19 | RHD4PRSHLDOSTC1000, RHD4PRSHLSTAGTC1000, RHD4CZ2C082TC2100 | -134d |
| RHD4CZ2C082TC2400 |  | Backfilling of HDPE Ducts for Telecom Network - (RD-C-8 /2)-Z2-C082-TC | 8d | 2027-05-20 | 2027-05-29 | RHD4CZ2C082TC2200 | -134d |
|  | 870 | **RHD4-02-002-C082-(TC)-Telecommunications Manholes** |  | 2027-07-05 | 2027-07-08 |  |  |
| RHD4CZ2C082TC5100 |  | Excavation for Manholes for Telecom Network - (RD-C-8 /2)-Z2-C082-TC | 2d | 2027-07-05 | 2027-07-06 | RHD4ENSDZ2APPTC190, RHD4CZ2C082TC2100, RHD4CZ2C082SL1100, RHD4CZ2C082SL6100 | -121d |
| RHD4CZ2C082TC5200 |  | Installation of Manholes for Telecom Network - (RD-C-8 /2)-Z2-C082-TC | 2d | 2027-07-07 | 2027-07-08 | RHD4PRSHLDOSTC1200, RHD4PRSHLSTAGTC1200, RHD4CZ2C082TC5100, RHD4CZ2C082TC2200 SS, RHD4CZ2C082SL5200 | -121d |
|  | 872 | **RHD4-02-002-Z2-C082-Information and Communication Technologies - ICT** |  | 2027-04-24 | 2027-05-26 |  |  |
|  | 873 | **RHD4-02-002-C082-(ICT)-Information and Communication Technologies Ducts** |  | 2027-04-24 | 2027-05-26 |  |  |
| RHD4CZ2C082ICT2100 |  | Excavation of HDPE Ducts for ICT Network - (RD-C-8 /2)-Z2-C082-ICT | 7d | 2027-04-24 | 2027-05-01 | RHD4ENSDZ2APPICT200, RHD4CZ2C082IRR1500 | -132d |
| RHD4CZ2C082ICT2200 |  | Installation of HDPE Ducts for ICT Network - (RD-C-8 /2)-Z2-C082-ICT | 11d | 2027-05-02 | 2027-05-13 | RHD4PRSHLDOSICT1000, RHD4PRSHLSTAGICT1000, RHD4CZ2C082ICT2100 | -132d |
| RHD4CZ2C082ICT2400 |  | Backfilling of HDPE Ducts for ICT Network - (RD-C-8 /2)-Z2-C082-ICT | 7d | 2027-05-19 | 2027-05-26 | RHD4CZ2C082ICT2200, RHD4CZ2C082ICT5200 | -132d |
|  | 874 | **RHD4-02-002-C082-(ICT)-Information and Communication Technologies Manholes** |  | 2027-05-02 | 2027-05-08 |  |  |
| RHD4CZ2C082ICT5100 |  | Excavation for Manholes for ICT Network - (RD-C-8 /2)-Z2-C082-ICT | 3d | 2027-05-02 | 2027-05-04 | RHD4ENSDZ2APPICT200, RHD4CZ2C082ICT2100 | -127d |
| RHD4CZ2C082ICT5200 |  | Installation of Manholes for ICT Network - (RD-C-8 /2)-Z2-C082-ICT | 3d | 2027-05-05 | 2027-05-08 | RHD4PRSHLDOSICT1200, RHD4PRSHLSTAGICT1200, RHD4CZ2C082ICT5100 | -127d |
|  | 863 | **RHD4-02-002-Z2-C082-Landscape Network - LS** |  |  |  |  |  |
|  | 864 | **RHD4-02-002-C082-(LS)-Landscape Lighting cables** |  |  |  |  |  |
|  | 865 | **RHD4-02-002-C082-(LS)-Landscape Feeder Pillars** |  |  |  |  |  |
|  | 866 | **RHD4-02-002-C082-(LS)-Landscape Bollard Poles** |  |  |  |  |  |
|  | 867 | **RHD4-02-002-C082-(LS)-Landscape Feeder Pillars Earthing** |  |  |  |  |  |
|  | 876 | **RHD4-02-002-Z2-C082-Security Network - CCTV** |  | 2027-05-30 | 2027-07-13 |  |  |
|  | 877 | **RHD4-02-002-C082-(CCTV)-Civil Works** |  | 2027-05-30 | 2027-06-09 |  |  |
| RHD4CZ2C082CCTV2100 |  | Civil Works for Security Network - (RD-C-8 /2)-Z2-C082-CCTV | 10d | 2027-05-30 | 2027-06-09 | RHD4CZ2C082ICT2400, RHD4CZ2C082TC2400 | -134d |
|  | 878 | **RHD4-02-002-C082-(CCTV)-CCTV Poles** |  | 2027-06-10 | 2027-06-21 |  |  |
| RHD4CZ2C082CCTV1100 |  | Excavation for RC Base for CCTV Poles for Security Network - (RD-C-8 /2)-Z2-C082-CCTV | 2d | 2027-06-10 | 2027-06-12 | RHD4ENSDZ2APPCCTV210, RHD4CZ2C082CCTV2100 | -134d |
| RHD4CZ2C082CCTV1200 |  | Installation for RC Base for CCTV Poles for Security Network - (RD-C-8 /2)-Z2-C082-CCTV | 2d | 2027-06-13 | 2027-06-14 | RHD4CZ2C082CCTV1100 | -134d |
| RHD4CZ2C082CCTV1300 |  | Backfill for RC Base for CCTV Poles for Security Network - (RD-C-8 /2)-Z2-C082-CCTV | 2d | 2027-06-15 | 2027-06-16 | RHD4CZ2C082CCTV1200 | -134d |
| RHD4CZ2C082CCTV1400 |  | Installation for CCTV Poles for Security Network - (RD-C-8 /2)-Z2-C082-CCTV | 2d | 2027-06-17 | 2027-06-19 | RHD4PRSHLDOSCCTV1000, RHD4PRSHLSTACCTV1000, RHD4CZ2C082CCTV1300 | -134d |
| RHD4CZ2C082CCTV1500 |  | Protection post Installation for CCTV Poles for Security Network - (RD-C-8 /2)-Z2-C082-CCTV | 2d | 2027-06-20 | 2027-06-21 | RHD4CZ2C082CCTV1400 | -132d |
|  | 879 | **RHD4-02-002-C082-(CCTV)-Camera** |  | 2027-06-24 | 2027-06-26 |  |  |
| RHD4CZ2C082CCTV3100 |  | Installation for Cameras for Security Network - (RD-C-8 /2)-Z2-C082-CCTV | 2d | 2027-06-24 | 2027-06-26 | RHD4PRSHLDOSCCTV1100, RHD4PRSHLSTACCTV1100, RHD4CZ2C082CCTV1400, RHD4CZ2C082CCTV4100, RHD4CZ2C082CCTV4200, RHD4CZ2C082CCTV1500 | -134d |
|  | 880 | **RHD4-02-002-C082-(CCTV)-Power and Infrastructure** |  | 2027-06-20 | 2027-06-23 |  |  |
| RHD4CZ2C082CCTV4100 |  | Installation of Power outlet, UPS and midspan for PTZ Camerafor Cameras for Security Network - (RD-C-8 /2)-Z2-C082-CCTV | 2d | 2027-06-20 | 2027-06-21 | RHD4PRSHLDOSCCTV1300, RHD4PRSHLSTACCTV1300, RHD4CZ2C082CCTV1400 | -134d |
| RHD4CZ2C082CCTV4200 |  | Short Range Wireless PoP wireless Bridgefor CCTV Poles for Security Network - (RD-C-8 /2)-Z2-C082-CCTV | 2d | 2027-06-22 | 2027-06-23 | RHD4CZ2C082CCTV4100 | -134d |
|  | 882 | **RHD4-02-002-C082-(CCTV)-CCTV Panels and Components** |  | 2027-06-27 | 2027-07-13 |  |  |
| RHD4CZ2C082CCTV6100 |  | Installation for CCTV Panels for Security Network - (RD-C-8 /2)-Z2-C082-CCTV | 15d | 2027-06-27 | 2027-07-13 | RHD4PRSHLDOSCCTV1200, RHD4PRSHLSTACCTV1200, RHD4PRLOLSTACCTV1001, RHD4CZ2C082CCTV4200, RHD4CZ2C082CCTV3100 | -134d |
|  | 324 | **RHD4-02-002-Z1** |  | 2026-09-15 | 2028-03-28 |  |  |
|  | 514 | **RHD4-02-002-Z1-L101** |  | 2026-09-24 | 2028-03-16 |  |  |
|  | 545 | **RHD4-02-002-Z1-L101-Crossings Sewage Network - SWCr** |  |  |  |  |  |
|  | 555 | **RHD4-02-002-L101-(SWCr)-MH Works - 1200 mm diameter** |  |  |  |  |  |
|  | 556 | **RHD4-02-002-L101-(SWCr)-MH Works - 1200 mm diameter with Back drop** |  |  |  |  |  |
|  | 551 | **RHD4-02-002-L101-(SWCr)-UPVC Pipes - 200 mm diameter** |  |  |  |  |  |
|  | 589 | **RHD4-02-002-Z1-L101-Crossings Potable Network - PTCr** |  |  |  |  |  |
|  | 590 | **RHD4-02-002-L101-(PTCr)-HDPE Pipes - 110 mm diameter** |  |  |  |  |  |
|  | 595 | **RHD4-02-002-L101-(PTCr)-Gate Valves (Direct Buried)** |  |  |  |  |  |
|  | 636 | **RHD4-02-002-Z1-L101-Crossings Irrigation Network - IRRC** |  |  |  |  |  |
|  | 641 | **RHD4-02-002-L101-(IRRC)-HDPE Pipes - 315 mm diameter** |  |  |  |  |  |
|  | 637 | **RHD4-02-002-L101-(IRRC)-HDPE Pipes - 160 mm diameter** |  |  |  |  |  |
|  | 645 | **RHD4-02-002-L101-(IRRC)-Gate Valves (Direct Buried)** |  |  |  |  |  |
|  | 646 | **RHD4-02-002-L101-(IRRC)-Butterfly Valve Chamber** |  |  |  |  |  |
|  | 647 | **RHD4-02-002-L101-(IRRC)-Butterfly Valves** |  |  |  |  |  |
|  | 693 | **RHD4-02-002-Z1-L101-Road Works - RD** |  | 2027-03-27 | 2028-03-16 |  |  |
|  | 694 | **RHD4-02-002-L101-(RD)-Subgrade** |  | 2027-03-27 | 2027-04-08 |  |  |
| RHD4CZ1L101RD1100 |  | Supply, lay and compaction subgrade compacted thickness 300 mm for Roads - (RD-L-10/1)-Z1-L101-RD | 12d | 2027-03-27 | 2027-04-08 | RHD4ENSDZ1APPRD220, RHD4ENSDZ1APPEW100, RHD4PRSHLDOSSW1000, RHD4PRSHLDOSST1701, RHD4PRSHLSTAGST1700, RHD4CZ1L101ST1505, RHD4CZ1L101ST7300, RHD4CZ1L101ICT3400 | -185d |
|  | 695 | **RHD4-02-002-L101-(RD)-Aggregate Base Course** |  | 2027-04-10 | 2027-04-19 |  |  |
| RHD4CZ1L101RD2100 |  | Supply, lay and compaction Aggregate base course compacted thickness 300 mmfor Roads - (RD-L-10/1)-Z1-L101-RD | 9d | 2027-04-10 | 2027-04-19 | RHD4PRSHLDOSRD1000, RHD4PRSHLSTAGRD1000, RHD4CZ1L101RD1100 | -185d |
|  | 696 | **RHD4-02-002-L101-(RD)-Bituminous base course Two Layers, including (MC1)&(RC2)** |  | 2027-04-20 | 2028-01-29 |  |  |
| RHD4CZ1L101RD3100 |  | Supply, lay and Asphaltic base course including Prime Coat (MC1) for 1st Layer - (RD-L-10/1)-Z1-L101-RD | 2d | 2027-04-20 | 2027-04-21 | RHD4PRSHLDOSRD1100, RHD4ENMSASPH2000, RHD4CZ9L02RD3100, RHD4ENMSASPH2010, RHD4PRSHLSTAGRD1100, RHD4CZ1L101RD2100 | -185d |
| RHD4CZ1L101RD3200 |  | Supply, lay and Asphaltic base course including Tack Coat (RC2) for 2nd Layer - (RD-L-10/1)-Z1-L101-RD | 2d | 2028-01-27 | 2028-01-29 | RHD4PRSHLDOSRD1100, RHD4PRSHLSTAGRD1100, RHD4CZ1L101RD3100, RHD4CZ1L101CCTV6100 | -180d |
|  | 698 | **RHD4-02-002-L101-(RD)-Precast Concrete Curb** |  | 2028-01-30 | 2028-02-05 |  |  |
| RHD4CZ1L101RD5100 |  | Supply and installation Precast Concrete Kerb for Roads - (RD-L-10/1)-Z1-L101-RD | 6d | 2028-01-30 | 2028-02-05 | RHD4PRSHLDOSRD1200, RHD4ENMSRD2000, RHD4ENMSRD2010, RHD4PRSHLSTAGRD1200, RHD4CZ1L101RD3200 | -180d |
|  | 701 | **RHD4-02-002-L101-(RD)-Traffic Signage** |  | 2028-02-06 | 2028-02-13 |  |  |
| RHD4CZ1L101RD8100 |  | Installation of Traffic Signage for Road Network - (RD-L-10/1)-Z1-L101-RD | 7d | 2028-02-06 | 2028-02-13 | RHD4PRSHLDOSRD1600, RHD4PRSHLSTAGRD1600, RHD4CZ1L101RD5100, RHD4CZ1L101TC2400, RHD4CZ1L101ICT2400 | -180d |
|  | 699 | **RHD4-02-002-L101-(RD)-Precast Interlocking Block Pavers** |  | 2028-02-14 | 2028-03-06 |  |  |
| RHD4CZ1L101RD6100 |  | Interlocking block pavers for sidewalk-footpath for Side walks and Parking areas - (RD-L-10/1)-Z1-L101-RD | 15d | 2028-02-14 | 2028-03-06 | RHD4PRSHLDOSRD1300, RHD4PRSHLDOSRD1400, RHD4ENMSRD2000, RHD4ENMSRD2010, RHD4PRSHLSTAGRD1300, RHD4PRSHLSTAGRD1400, RHD4CZ1L101RD8100 | -180d |
|  | 697 | **RHD4-02-002-L101-(RD)-Bituminous concrete wearing course including tack coat (RC2)** |  | 2028-03-07 | 2028-03-08 |  |  |
| RHD4CZ1L101RD4100 |  | Supply, lay and compaction Asphaltic wearing course including tack Coat (RC2)for Road Network - (RD-L-10/1)-Z1-L101-RD | 2d | 2028-03-07 | 2028-03-08 | RHD4CZ1L101RD5100, RHD4CZ1L101RD6100 | -180d |
|  | 700 | **RHD4-02-002-L101-(RD)-Pavement Marking** |  | 2028-03-09 | 2028-03-16 |  |  |
| RHD4CZ1L101RD7100 |  | Pavement Markings for Road Network - (RD-L-10/1)-Z1-L101-RD | 7d | 2028-03-09 | 2028-03-16 | RHD4PRSHLDOSRD1500, RHD4PRSHLSTAGRD1500, RHD4CZ1L101RD4100 | -180d |
|  | 518 | **RHD4-02-002-Z1-L101-Storm Network - ST** |  | 2026-09-24 | 2027-05-09 |  |  |

| ID | WBS | Task | Duration | Start | Finish | Predecessors | Complete | Total float |
| --- | --- | --- | --- | --- | --- | --- | --- | --- |
|  | 537 | **RHD4-02-002-L101-(ST)-MH Works - 2000 mm diameter** |  |  |  |  |  |  |
|  | 536 | **RHD4-02-002-L101-(ST)-MH Works - 1500 mm diameter** |  | 2026-09-26 | 2027-04-29 |  |  |  |
| RHD4CZ1L101ST3101 |  | Excavation and PC Blinding works for MH 1500 mm - (RD-L-10/1)-Z1-L101-ST | 4d | 2026-09-26 A | 2027-03-21 | RHD4ENSDZ1APPST110, RHD4ENMSST2000, RHD4CZ1L101ST1505 | 87% | -157d |
| RHD4CZ1L101ST3201 |  | Installation of Base for MH 1500 mm - (RD-L-10/1)-Z1-L101-ST | 4d | 2027-03-22 | 2027-03-25 | RHD4PRSHLSTAGST1600, RHD4CZ1L101ST3101 |  | -157d |
| RHD4CZ1L101ST3301 |  | MH Ring and C.Slab works and Backfilling works for MH 1500 mm - (RD-L-10/1)-Z1-L101-ST | 4d | 2027-03-27 | 2027-03-30 | RHD4PRSHLDOSST1600, RHD4CZ1L101ST3201 |  | -157d |
| RHD4CZ1L101ST3401 |  | Steel Cover for MH 1500 mm - (RD-L-10/1)-Z1-L101-ST | 3d | 2027-04-22 | 2027-04-25 | RHD4PRSHLDOSST1700, RHD4PRSHLSTAGST1700, RHD4CZ1L101ST1500, RHD4CZ1L101ST6100 |  | -185d |
| RHD4CZ1L101ST3501 |  | Finishing, Benching, Testing works for MH 1500 mm - (RD-L-10/1)-Z1-L101-ST | 4d | 2027-04-26 | 2027-04-29 | RHD4CZ1L101ST3401 |  | -185d |
|  | 535 | **RHD4-02-002-L101-(ST)-MH Works - 1200 mm diameter** |  | 2026-10-01 | 2027-05-09 |  |  |  |
| RHD4CZ1L101ST3100 |  | Excavation and PC Blinding works for MH 1200 mm - (RD-L-10/1)-Z1-L101-ST | 2d | 2026-10-01 A | 2026-10-24 A | RHD4ENSDZ1APPST110, RHD4ENMSST2000, RHD4ENMSST2010, RHD4CZ1L101ST3501 | 100% |  |
| RHD4CZ1L101ST3200 |  | Installation of Base for MH 1200 mm - (RD-L-10/1)-Z1-L101-ST | 2d | 2027-05-01 | 2027-05-02 | RHD4PRSHLSTAGST1600, RHD4CZ1L101ST3100, RHD4CZ1L101ST3201 |  | -185d |
| RHD4CZ1L101ST3300 |  | MH Ring and C.Slab works and Backfilling works for MH 1200 mm - (RD-L-10/1)-Z1-L101-ST | 2d | 2027-05-03 | 2027-05-04 | RHD4PRSHLDOSST1600, RHD4CZ1L101ST3200, RHD4CZ1L101ST3301 |  | -185d |
| RHD4CZ1L101ST3400 |  | Steel Cover for MH 1200 mm - (RD-L-10/1)-Z1-L101-ST | 2d | 2027-05-05 | 2027-05-06 | RHD4PRSHLDOSST1700, RHD4PRSHLSTAGST1700, RHD4CZ1L101ST1500, RHD4CZ1L101ST6100, RHD4CZ1L101ST3401, RHD4CZ1L101ST3300 |  | -185d |
| RHD4CZ1L101ST3500 |  | Finishing, Benching, Testing works for MH 1200 mm - (RD-L-10/1)-Z1-L101-ST | 2d | 2027-05-08 | 2027-05-09 | RHD4CZ1L101ST3400, RHD4CZ1L101ST3501 |  | -184d |
|  | 525 | **RHD4-02-002-L101-(ST)-GRP Pipes - 1000 mm diameter** |  |  |  |  |  |  |
|  | 524 | **RHD4-02-002-L101-(ST)-GRP Pipes - 900 mm diameter** |  | 2026-09-24 | 2027-03-16 |  |  |  |
| RHD4CZ1L101ST1105 |  | Excavation works for GRP Pipe Line 900 mm - (RD-L-10/1)-Z1-L101-ST | 2d | 2026-09-24 A | 2026-10-17 A | RHD4ENSDZ1APPST110, RHD4CZ1L101RW2000, RHD4PRSHLDOSST1300, RHD4CZ5L016ST4600, RHD4CZ6A015ST4600, RHD4CZ5C061ST7500, RHD4CZ4L014TC3400, RHD4CZ5L016ST1502 | 100% |  |
| RHD4CZ1L101ST1205 |  | Bedding works for GRP Pipe Line 900 mm - (RD-L-10/1)-Z1-L101-ST | 2d | 2026-09-26 A | 2026-10-18 A | RHD4CZ1L101ST1105, RHD4CZ6A02PT3200, RHD4CZ4L014ICT3400, RHD4CZ5L016ST1509, RHD4PRSHLSTAGICT1000 | 100% |  |
| RHD4CZ1L101ST1305 |  | Installing for GRP Pipe Line 900 mm - (RD-L-10/1)-Z1-L101-ST | 2d | 2026-10-01 A | 2026-10-20 A | RHD4PRSHLSTAGST1000, RHD4CZ1L101ST1205, RHD4PRSHLDOSST1600, RHD4PRSHLPOST1000, RHD4PRSHLDOSST1000 | 100% |  |
| RHD4CZ1L101ST1405 |  | Primary Test for GRP Pipe Line 900 mm - (RD-L-10/1)-Z1-L101-ST | 2d | 2027-03-13 | 2027-03-14 | RHD4CZ1L101ST1305 |  | -185d |
| RHD4CZ1L101ST1505 |  | Backfilling and warning tape works for GRP Pipe Line 900 mm - (RD-L-10/1)-Z1-L101-ST | 2d | 2027-03-15 | 2027-03-16 | RHD4CZ1L101ST1405, RHD4CZ2L102ST3502, RHD4CZ6C052ST8500 |  | -185d |
|  | 523 | **RHD4-02-002-L101-(ST)-GRP Pipes - 800 mm diameter** |  | 2026-10-17 | 2027-03-21 |  |  |  |
| RHD4CZ1L101ST1104 |  | Excavation works for GRP Pipe Line 800 mm - (RD-L-10/1)-Z1-L101-ST | 2d | 2026-10-17 A | 2026-10-18 A | RHD4ENSDZ1APPST110, RHD4CZ1L101ST1505, RHD4CZ6A02PT4500 | 100% |  |
| RHD4CZ1L101ST1204 |  | Bedding works for GRP Pipe Line 800 mm - (RD-L-10/1)-Z1-L101-ST | 2d | 2026-10-24 A | 2026-10-25 A | RHD4CZ1L101ST1104, RHD4CZ1L101ST1205, RHD4CZ6C052ST7500, RHD4CZ5RA07SW2500, RHD4CZ5RA07SW3500 | 100% |  |
| RHD4CZ1L101ST1304 |  | Installing for GRP Pipe Line 800 mm - (RD-L-10/1)-Z1-L101-ST | 2d | 2026-10-26 A | 2026-10-27 A | RHD4PRSHLSTAGST1000, RHD4CZ1L101ST1204, RHD4CZ1L101ST1305, RHD4PRSHLDOSST1600, RHD4PRSHLPOST1000, RHD4PRSHLDOSST1000 | 100% |  |
| RHD4CZ1L101ST1404 |  | Primary Test for GRP Pipe Line 800 mm - (RD-L-10/1)-Z1-L101-ST | 2d | 2027-03-17 | 2027-03-18 | RHD4CZ1L101ST1304, RHD4CZ7C013IRR1504, RHD4CZ5A014MV2300, RHD4CZ4L014ST3500, RHD4CZ5C061SW5200, RHD4CZ5C051SW3501 |  | -176d |
| RHD4CZ1L101ST1504 |  | Backfilling and warning tape works for GRP Pipe Line 800 mm - (RD-L-10/1)-Z1-L101-ST | 2d | 2027-03-20 | 2027-03-21 | RHD4CZ1L101ST1404, RHD4CZ1L101ST1505, RHD4CTUN1Z5STG31070 |  | -176d |
|  | 522 | **RHD4-02-002-L101-(ST)-GRP Pipes - 700 mm diameter** |  | 2026-10-17 | 2027-03-25 |  |  |  |
| RHD4CZ1L101ST1103 |  | Excavation works for GRP Pipe Line 700 mm - (RD-L-10/1)-Z1-L101-ST | 2d | 2026-10-17 A | 2026-10-18 A | RHD4ENSDZ1APPST110, RHD4CZ1L101ST1104, RHD4CZ1L101ST1504, RHD4CZ5A014IRR3203, RHD4CZ1C081TC3400, RHD4CZ6C052ST3501, RHD4CZ2C082ST3502 | 100% |  |
| RHD4CZ1L101ST1203 |  | Bedding works for GRP Pipe Line 700 mm - (RD-L-10/1)-Z1-L101-ST | 2d | 2026-10-19 A | 2026-10-20 A | RHD4CZ1L101ST1103, RHD4CZ1L101ST1204, RHD4CZ5C061SW3501, RHD4CZ5A014IRR3200, RHD4CZ2L102ST8500 | 100% |  |
| RHD4CZ1L101ST1303 |  | Installing for GRP Pipe Line 700 mm - (RD-L-10/1)-Z1-L101-ST | 2d | 2026-10-20 A | 2026-10-21 A | RHD4PRSHLSTAGST1000, RHD4CZ1L101ST1203, RHD4CZ1L101ST1304, RHD4PRSHLDOSST1600, RHD4PRSHLPOST1000, RHD4PRSHLDOSST1000, RHD4CZ1C081ST8500, RHD4CZ6C052ST3500, RHD4CZ6C052MV2400 | 100% |  |
| RHD4CZ1L101ST1403 |  | Primary Test for GRP Pipe Line 700 mm - (RD-L-10/1)-Z1-L101-ST | 2d | 2027-03-22 | 2027-03-23 | RHD4CZ1L101ST1303, RHD4CZ1C081ST3401 SS, RHD4CZ6C052LV2400 |  | -176d |
| RHD4CZ1L101ST1503 |  | Backfilling and warning tape works for GRP Pipe Line 700 mm - (RD-L-10/1)-Z1-L101-ST | 2d | 2027-03-24 | 2027-03-25 | RHD4CZ1L101ST1403, RHD4CZ1L101ST1504 |  | -176d |
|  | 521 | **RHD4-02-002-L101-(ST)-GRP Pipes - 600 mm diameter** |  | 2026-10-17 | 2027-03-30 |  |  |  |
| RHD4CZ1L101ST1102 |  | Excavation works for GRP Pipe Line 600 mm - (RD-L-10/1)-Z1-L101-ST | 2d | 2026-10-17 A | 2026-10-18 A | RHD4ENSDZ1APPST110, RHD4CZ1L101ST1103, RHD4CZ1L101ST1503, RHD4CZ3L122ST3502 | 100% |  |
| RHD4CZ1L101ST1202 |  | Bedding works for GRP Pipe Line 600 mm - (RD-L-10/1)-Z1-L101-ST | 2d | 2026-10-19 A | 2026-10-20 A | RHD4CZ1L101ST1102, RHD4CZ1L101ST1203 | 100% |  |
| RHD4CZ1L101ST1302 |  | Installing for GRP Pipe Line 600 mm - (RD-L-10/1)-Z1-L101-ST | 2d | 2026-10-20 A | 2026-10-21 A | RHD4PRSHLSTAGST1000, RHD4CZ1L101ST1202, RHD4CZ1L101ST1303, RHD4PRSHLDOSST1600, RHD4PRSHLPOST1000, RHD4PRSHLDOSST1000 | 100% |  |
| RHD4CZ1L101ST1402 |  | Primary Test for GRP Pipe Line 600 mm - (RD-L-10/1)-Z1-L101-ST | 2d | 2027-03-27 | 2027-03-28 | RHD4CZ1L101ST1302 |  | -176d |
| RHD4CZ1L101ST1502 |  | Backfilling and warning tape works for GRP Pipe Line 600 mm - (RD-L-10/1)-Z1-L101-ST | 2d | 2027-03-29 | 2027-03-30 | RHD4CZ1L101ST1402, RHD4CZ1L101ST1503 |  | -176d |
|  | 520 | **RHD4-02-002-L101-(ST)-GRP Pipes - 500 mm diameter** |  | 2026-10-17 | 2027-04-01 |  |  |  |
| RHD4CZ1L101ST1101 |  | Excavation works for GRP Pipe Line 500 mm - (RD-L-10/1)-Z1-L101-ST | 2d | 2026-10-17 A | 2026-10-18 A | RHD4ENSDZ1APPST110, RHD4CZ1L101ST1102, RHD4CZ9L05MV2400, RHD4CZ6A02LV3400 | 100% |  |
| RHD4CZ1L101ST1201 |  | Bedding works for GRP Pipe Line 500 mm - (RD-L-10/1)-Z1-L101-ST | 2d | 2026-10-24 A | 2026-10-25 A | RHD4CZ1L101ST1101, RHD4CZ1L101ST1202 | 100% |  |
| RHD4CZ1L101ST1301 |  | Installing for GRP Pipe Line 500 mm - (RD-L-10/1)-Z1-L101-ST | 2d | 2026-10-26 A | 2026-10-27 A | RHD4PRSHLSTAGST1000, RHD4CZ1L101ST1201, RHD4CZ1L101ST1302, RHD4PRSHLDOSST1600, RHD4PRSHLPOST1000, RHD4PRSHLDOSST1000 | 100% |  |
| RHD4CZ1L101ST1401 |  | Primary Test for GRP Pipe Line 500 mm - (RD-L-10/1)-Z1-L101-ST | 2d | 2027-03-27 | 2027-03-28 | RHD4CZ1L101ST1301 |  | -174d |
| RHD4CZ1L101ST1501 |  | Backfilling and warning tape works for GRP Pipe Line 500 mm - (RD-L-10/1)-Z1-L101-ST | 2d | 2027-03-31 | 2027-04-01 | RHD4CZ1L101ST1401, RHD4CZ1L101ST1502 |  | -176d |
|  | 519 | **RHD4-02-002-L101-(ST)-GRP Pipes - 400 mm diameter** |  | 2026-10-24 | 2027-04-13 |  |  |  |
| RHD4CZ1L101ST1100 |  | Excavation works for GRP Pipe Line 400 mm - (RD-L-10/1)-Z1-L101-ST | 2d | 2026-10-24 A | 2026-10-25 A | RHD4ENSDZ1APPST110, RHD4CZ1L101ST1101, RHD4CZ7L015SL2400 | 100% |  |
| RHD4CZ1L101ST1200 |  | Bedding works for GRP Pipe Line 400 mm - (RD-L-10/1)-Z1-L101-ST | 2d | 2026-10-26 A | 2026-10-27 A | RHD4CZ1L101ST1100, RHD4CZ1L101ST1201, RHD4CZ5A014PT3203, RHD4CZ5A014PT4500, RHD4CZ5C061PT3202, RHD4CZ5C061IRR1502 | 100% |  |
| RHD4CZ1L101ST1300 |  | Installing for GRP Pipe Line 400 mm - (RD-L-10/1)-Z1-L101-ST | 2d | 2026-10-27 A | 2026-10-28 A | RHD4PRSHLSTAGST1000, RHD4CZ1L101ST1200, RHD4CZ1L101ST1301, RHD4PRSHLDOSST1600, RHD4PRSHLPOST1000, RHD4PRSHLDOSST1000, RHD4CZ5C061PT4500, RHD4CZ5A014PT3202, RHD4CZ6C062MV2400 | 100% |  |
| RHD4CZ1L101ST1400 |  | Primary Test for GRP Pipe Line 400 mm - (RD-L-10/1)-Z1-L101-ST | 2d | 2027-04-03 | 2027-04-04 | RHD4CZ1L101ST1300, RHD4CZ5C061PT3200, RHD4CZ7C013IRR3203, RHD4CZ3C083RW2000 |  | -178d |
| RHD4CZ1L101ST1500 |  | Backfilling and warning tape works for GRP Pipe Line 400 mm - (RD-L-10/1)-Z1-L101-ST | 2d | 2027-04-12 | 2027-04-13 | RHD4CZ1L101ST1400, RHD4CZ1L101ST1501, RHD4CZ6C052PT3202, RHD4CZ7C013IRR3200, RHD4CZ6C052PT3203 |  | -184d |
|  | 533 | **RHD4-02-002-L101-(ST)-UPVC Pipes - 300 mm diameter** |  | 2026-10-17 | 2027-04-26 |  |  |  |
| RHD4CZ1L101ST2100 |  | Excavation works for UPVC Pipe Line 300 mm - (RD-L-10/1)-Z1-L101-ST | 2d | 2026-10-17 A | 2027-04-15 | RHD4ENSDZ1APPST110, RHD4CZ1L101ST7300, RHD4CZ1L101ST1500 | 80% | -184d |
| RHD4CZ1L101ST2200 |  | Bedding works for UPVC Pipe Line 300 mm - (RD-L-10/1)-Z1-L101-ST | 2d | 2027-04-17 | 2027-04-18 | RHD4CZ1L101ST2100, RHD4CZ6B17EX1002 |  | -184d |
| RHD4CZ1L101ST2300 |  | Installing for UPVC Pipe Line 300 mm - (RD-L-10/1)-Z1-L101-ST | 2d | 2027-04-19 | 2027-04-20 | RHD4PRSHLDOSST1100, RHD4PRSHLSTAGST1100, RHD4CZ1L101ST2200 |  | -184d |
| RHD4CZ1L101ST2400 |  | Primary Test for UPVC Pipe Line 300 mm - (RD-L-10/1)-Z1-L101-ST | 2d | 2027-04-21 | 2027-04-22 | RHD4CZ1L101ST2300, RHD4CZ9L06SL2400 |  | -179d |
| RHD4CZ1L101ST2500 |  | Backfilling and warning tape works for UPVC Pipe Line 300 mm - (RD-L-10/1)-Z1-L101-ST | 3d | 2027-04-24 | 2027-04-26 | RHD4CZ1L101ST2400, RHD4CZ1L101ST6100, RHD4CZ4L09ST1506 |  | -179d |
|  | 541 | **RHD4-02-002-L101-(ST)-Concrete Encasement** |  | 2027-04-20 | 2027-04-21 |  |  |  |
| RHD4CZ1L101ST6100 |  | Pipe Encasement for Storm Pipelines - (RD-L-10/1)-Z1-L101-ST | 2d | 2027-04-20 | 2027-04-21 | RHD4CZ1L101ST2300 SS, RHD4CZ1L101ST2300 FF, RHD4CZ1L101ST2200, RHD4CZ1L101RD2100 |  | -185d |
|  | 542 | **RHD4-02-002-Z1-L101-Catch Basin - ST** |  | 2026-10-24 | 2027-05-22 |  |  |  |
|  | 543 | **RHD4-02-002-L101-(ST)-Single Catch Basin Works** |  | 2026-10-24 | 2027-05-22 |  |  |  |
| RHD4CZ1L101ST7100 |  | Excavation works for Single Catch Basin - (RD-L-10/1)-Z1-L101-ST | 3d | 2026-10-24 A | 2026-10-25 A | RHD4ENSDZ1APPST110, RHD4CZ1L101ST1105 | 100% |  |
| RHD4CZ1L101ST7200 |  | PC Blinding, Installation and Pipe connection for Single Catch Basin - (RD-L-10/1)-Z1-L101-ST | 3d | 2027-02-23 | 2027-02-25 | RHD4CZ1L101ST7100 |  | -168d |
| RHD4CZ1L101ST7300 |  | Rings & C.Slab & Final Backfill for Single Catch Basin - (RD-L-10/1)-Z1-L101-ST | 4d | 2027-02-27 | 2027-03-02 | RHD4PRSHLDOSST1300, RHD4PRSHLSTAGST1300, RHD4CZ1L101ST7200 |  | -168d |
| RHD4CZ1L101ST7400 |  | Steel Cover for Single Catch Basin - (RD-L-10/1)-Z1-L101-ST | 3d | 2027-05-08 | 2027-05-10 | RHD4PRSHLDOSST1700, RHD4CZ1L101ST7300, RHD4CZ1L101ST3400 |  | -185d |
| RHD4CZ1L101ST7500 |  | Finishing and Insulation works for Single Catch Basin - (RD-L-10/1)-Z1-L101-ST | 6d | 2027-05-11 | 2027-05-22 | RHD4CZ1L101ST7400, RHD4CZ1L101ST3500 |  | -185d |
|  | 567 | **RHD4-02-002-Z1-L101-Sewage Network - SW** |  | 2026-10-19 | 2027-07-10 |  |  |  |
|  | 577 | **RHD4-02-002-L101-(SW)-MH Works - 1200 mm diameter** |  | 2026-10-19 | 2027-07-10 |  |  |  |
| RHD4CZ1L101SW3100 |  | Excavation and PC Blinding works for MH 1200 mm - (RD-L-10/1)-Z1-L101-SW | 10d | 2026-10-19 A | 2027-05-09 | RHD4ENSDZ1APPSW120, RHD4CZ1L101SW2100 | 76% | -138d |
| RHD4CZ1L101SW3200 |  | Installation of Base for MH 1200 mm - (RD-L-10/1)-Z1-L101-SW | 14d | 2027-05-10 | 2027-05-30 | RHD4CZ1L101SW3100 |  | -138d |
| RHD4CZ1L101SW3300 |  | MH Ring and C.Slab works and Backfilling works for MH 1200 mm - (RD-L-10/1)-Z1-L101-SW | 14d | 2027-05-31 | 2027-06-15 | RHD4PRSHLDOSSW1300, RHD4PRSHLSTAGSW1300, RHD4CZ1L101SW3200 |  | -138d |

| ID | WBS | Task | Duration | Start | Finish | Predecessors | Complete | Total float |
| --- | --- | --- | --- | --- | --- | --- | --- | --- |
| RHD4CZ1L101SW3400 |  | Steel Cover for MH 1200 mm - (RD-L-10/1)-Z1-L101-SW | 7d | 2027-06-16 | 2027-06-23 | RHD4PRSHLDOSSW1400, RHD4PRSHLSTAGSW1400, RHD4CZ1L101SW3300 |  | -138d |
| RHD4CZ1L101SW3500 |  | Finishing, Benching, Testing works for MH 1200 mm - (RD-L-10/1)-Z1-L101-SW | 14d | 2027-06-24 | 2027-07-10 | RHD4CZ1L101SW3400 |  | -138d |
|  | 578 | **RHD4-02-002-L101-(SW)-MH Works - 1200 mm diameter with Back drop** |  |  |  |  |  |  |
|  | 573 | **RHD4-02-002-L101-(SW)-UPVC Pipes - 200 mm diameter** |  | 2026-10-27 | 2027-06-23 |  |  |  |
| RHD4CZ1L101SW2100 |  | Excavation works for UPVC Pipe Line 200 mm - (RD-L-10/1)-Z1-L101-SW | 6d | 2026-10-27 A | 2027-05-03 | RHD4ENSDZ1APPSW120, RHD4CZ1L101ST2500, RHD4CZ4A013ST8500, RHD4CZ6C052IRR3202, RHD4CZ6C062ST3501 | 80% | -179d |
| RHD4CZ1L101SW2200 |  | Bedding works for UPVC Pipe Line 200 mm - (RD-L-10/1)-Z1-L101-SW | 6d | 2026-10-29 A | 2027-05-10 | RHD4CZ1L101SW2100 | 46% | -179d |
| RHD4CZ1L101SW2300 |  | Installing for UPVC Pipe Line 200 mm - (RD-L-10/1)-Z1-L101-SW | 7d | 2026-10-31 A | 2027-05-23 | RHD4PRSHLDOSSW1000, RHD4CZ1L101ST3300, RHD4PRSHLSTAGSW1000, RHD4CZ1L101SW2200, RHD4CZ6A015ST3500 | 46% | -179d |
| RHD4CZ1L101SW2400 |  | Primary Test for UPVC Pipe Line 200 mm - (RD-L-10/1)-Z1-L101-SW | 4d | 2027-06-13 | 2027-06-16 | RHD4CZ1L101SW2300, RHD4CZ9C071MV1200 |  | -196d |
| RHD4CZ1L101SW2500 |  | Backfilling and warning tape works for UPVC Pipe Line 200 mm - (RD-L-10/1)-Z1-L101-SW | 6d | 2027-06-17 | 2027-06-23 | RHD4CZ1L101SW2400, RHD4CZ3L122ICT2400 |  | -196d |
|  | 576 | **RHD4-02-002-L101-(SW)-Concrete Encasement** |  |  |  |  |  |  |
|  | 604 | **RHD4-02-002-Z1-L101-Potable Network - PT** |  | 2027-06-24 | 2027-07-28 |  |  |  |
|  | 606 | **RHD4-02-002-L101-(PT)-HDPE Pipes - 160 mm diameter** |  | 2027-06-24 | 2027-07-17 |  |  |  |
| RHD4CZ1L101PT1101 |  | Excavation works for HDPE Pipline 160 mm - (RD-L-10/1)-Z1-L101-PT | 4d | 2027-06-24 | 2027-06-28 | RHD4ENSDZ1APPPT130, RHD4ENMSPT2000, RHD4CZ1L101SW2500, RHD4CZ4C031ST3501 |  | -196d |
| RHD4CZ1L101PT1201 |  | Bedding works for HDPE Pipline 160 mm - (RD-L-10/1)-Z1-L101-PT | 3d | 2027-06-29 | 2027-07-01 | RHD4CZ1L101PT1101, RHD4CZ5L08SW2500, RHD4CZ2L102SW3500 |  | -196d |
| RHD4CZ1L101PT1301 |  | Installing for HDPE Pipline 160 mm - (RD-L-10/1)-Z1-L101-PT | 6d | 2027-07-03 | 2027-07-08 | RHD4PRSHLDOSPT1000, RHD4PRSHLSTAGPT1000, RHD4CZ1L101PT1201 |  | -196d |
| RHD4CZ1L101PT1401 |  | Primary Test for HDPE Pipline 160 mm - (RD-L-10/1)-Z1-L101-PT | 2d | 2027-07-10 | 2027-07-11 | RHD4CZ1L101PT1301 |  | -196d |
| RHD4CZ1L101PT1501 |  | Backfilling and warning tape works for HDPE Pipline 160 mm - (RD-L-10/1)-Z1-L101-PT | 5d | 2027-07-12 | 2027-07-17 | RHD4CZ1L101PT1401, RHD4CZ1C081IRR3200 |  | -196d |
|  | 605 | **RHD4-02-002-L101-(PT)-HDPE Pipes - 110 mm diameter** |  | 2027-06-24 | 2027-07-19 |  |  |  |
| RHD4CZ1L101PT1100 |  | Excavation works for HDPE Pipline 110 mm - (RD-L-10/1)-Z1-L101-PT | 2d | 2027-06-24 | 2027-06-26 | RHD4ENSDZ1APPPT130, RHD4ENMSPT2000, RHD4CZ1L101SW2500 |  | -184d |
| RHD4CZ1L101PT1200 |  | Bedding works for HDPE Pipline 110 mm - (RD-L-10/1)-Z1-L101-PT | 2d | 2027-07-03 | 2027-07-04 | RHD4CZ1L101PT1100, RHD4CZ1L101PT1201 |  | -189d |
| RHD4CZ1L101PT1300 |  | Installing for HDPE Pipline 110 mm - (RD-L-10/1)-Z1-L101-PT | 2d | 2027-07-10 | 2027-07-11 | RHD4PRSHLDOSPT1000, RHD4PRSHLSTAGPT1000, RHD4CZ1L101PT1200, RHD4CZ1L101PT1301 |  | -193d |
| RHD4CZ1L101PT1400 |  | Primary Test for HDPE Pipline 110 mm - (RD-L-10/1)-Z1-L101-PT | 2d | 2027-07-12 | 2027-07-13 | RHD4CZ1L101PT1300, RHD4CZ1L101PT1401 |  | -193d |
| RHD4CZ1L101PT1500 |  | Backfilling and warning tape works for HDPE Pipline 110 mm - (RD-L-10/1)-Z1-L101-PT | 2d | 2027-07-18 | 2027-07-19 | RHD4CZ1L101PT1400, RHD4CZ1L101PT1501, RHD4CZ4L014PT3203, RHD4CZ4C031SL1500, RHD4CZ4C031SL6100 |  | -196d |
|  | 421 | **RHD4-02-002-L101-(PT)-Gate Valves (Direct Buried)** |  | 2027-07-20 | 2027-07-28 |  |  |  |
| RHD4CZ1L101PT3100 |  | Installation for Direct Buried Gate Valves - (RD-L-10/1)-Z1-L101-PT | 4d | 2027-07-20 | 2027-07-24 | RHD4CZ1L101PT1500 |  | -196d |
| RHD4CZ1L101PT3200 |  | Stem and Service box for Direct Buried Gate Valves - (RD-L-10/1)-Z1-L101-PT | 4d | 2027-07-25 | 2027-07-28 | RHD4CZ1L101PT3100 |  | -196d |
|  | 428 | **RHD4-02-002-L101-(PT)-Fire Hydrant** |  | 2027-06-24 | 2027-07-18 |  |  |  |
| RHD4CZ1L101PT4100 |  | Excavation and Bedding and Pipe Installation for Fire Hydrant - (RD-L-10/1)-Z1-L101-PT | 6d | 2027-06-24 | 2027-06-30 | RHD4CZ1L101PT1100 SS |  | -166d |
| RHD4CZ1L101PT4200 |  | Valve Installation for Fire Hydrant - (RD-L-10/1)-Z1-L101-PT | 4d | 2027-07-01 | 2027-07-05 | RHD4CZ1L101PT4100 |  | -166d |
| RHD4CZ1L101PT4300 |  | Stem for Fire Hydrant - (RD-L-10/1)-Z1-L101-PT | 4d | 2027-07-06 | 2027-07-10 | RHD4CZ1L101PT4200 |  | -166d |
| RHD4CZ1L101PT4400 |  | Fire Installation for Fire Hydrant - (RD-L-10/1)-Z1-L101-PT | 4d | 2027-07-11 | 2027-07-14 | RHD4CZ1L101PT4300 |  | -166d |
| RHD4CZ1L101PT4500 |  | Protection Barriers for Fire Hydrant - (RD-L-10/1)-Z1-L101-PT | 3d | 2027-07-15 | 2027-07-18 | RHD4CZ1L101PT4400 |  | -166d |
|  | 618 | **RHD4-02-002-L101-(PT)-Concrete Encasement** |  |  |  |  |  |  |
|  | 619 | **RHD4-02-002-Z1-L101-Irrigation Network - IRR** |  | 2027-07-29 | 2027-08-31 |  |  |  |
|  | 626 | **RHD4-02-002-L101-(IRR)-HDPE Pipes - 450 mm diameter** |  |  |  |  |  |  |
|  | 6107 | **RHD4-02-002-L101-(IRR)-HDPE Pipes - 160 mm diameter** |  | 2027-08-05 | 2027-08-18 |  |  |  |
| RHD4CZ1L101IRR1100 |  | Excavation works for HDPE Pipline 160 mm - (RD-L-10/1)-Z1-L101-IRR | 3d | 2027-08-05 | 2027-08-08 | RHD4CZ1L101PT3200, RHD4CZ1L101SW3100, RHD4CZ1L101IRR1104 |  | -195d |
| RHD4CZ1L101IRR1200 |  | Bedding works for HDPE Pipline 160 mm - (RD-L-10/1)-Z1-L101-IRR | 2d | 2027-08-09 | 2027-08-10 | RHD4CZ1L101IRR1100 |  | -195d |
| RHD4CZ1L101IRR1300 |  | Installing for HDPE Pipline 160 mm - (RD-L-10/1)-Z1-L101-IRR | 3d | 2027-08-11 | 2027-08-14 | RHD4CZ1L101IRR1200 |  | -195d |
| RHD4CZ1L101IRR1400 |  | Primary Test for HDPE Pipline 160 mm - (RD-L-10/1)-Z1-L101-IRR | 2d | 2027-08-15 | 2027-08-16 | RHD4CZ1L101IRR1300 |  | -195d |
| RHD4CZ1L101IRR1500 |  | Backfilling and warning tape works for HDPE Pipline 160 mm - (RD-L-10/1)-Z1-L101-IRR | 2d | 2027-08-17 | 2027-08-18 | RHD4CZ1L101IRR1400 |  | -195d |
|  | 6116 | **RHD4-02-002-L101-(IRR)-Butterfly Valve Chamber** |  | 2027-08-09 | 2027-08-17 |  |  |  |
| RHD4CZ1L101IRR2100 |  | Excavation and Bedding for Butterfly Valve Chamber for Irrigation Network - (RD-L-10/1)-Z1-L101-IRR | 2d | 2027-08-09 | 2027-08-10 | RHD4CZ1L101IRR1100 |  | -191d |
| RHD4CZ1L101IRR2200 |  | PC works for Butterfly Valve Chamber for Irrigation Network - (RD-L-10/1)-Z1-L101-IRR | 2d | 2027-08-11 | 2027-08-12 | RHD4CZ1L101IRR2100 |  | -191d |
| RHD4CZ1L101IRR2300 |  | Installation for Butterfly Valve Chamber for Irrigation Network - (RD-L-10/1)-Z1-L101-IRR | 2d | 2027-08-14 | 2027-08-15 | RHD4CZ1L101IRR2200 |  | -191d |
| RHD4CZ1L101IRR2400 |  | Backfilling works for Butterfly Valve Chamber for Irrigation Network - (RD-L-10/1)-Z1-L101-IRR | 2d | 2027-08-16 | 2027-08-17 | RHD4CZ1L101IRR2300 |  | -191d |
|  | 6117 | **RHD4-02-002-L101-(IRR)-Butterfly Valves** |  | 2027-08-16 | 2027-08-19 |  |  |  |
| RHD4CZ1L101IRR3101 |  | Installation for Butterfly Valves for Irrigation Network - (RD-L-10/1)-Z1-L101-IRR | 2d | 2027-08-16 | 2027-08-17 | RHD4CZ1L101IRR2300 |  | -191d |
| RHD4CZ1L101IRR3201 |  | Stem and Service box for Butterfly Valves for Irrigation Network - (RD-L-10/1)-Z1-L101-IRR | 2d | 2027-08-18 | 2027-08-19 | RHD4CZ1L101IRR3101, RHD4CZ1L101IRR2400 |  | -191d |
|  | 625 | **RHD4-02-002-L101-(IRR)-HDPE Pipes - 400 mm diameter** |  |  |  |  |  |  |
|  | 624 | **RHD4-02-002-L101-(IRR)-HDPE Pipes - 315 mm diameter** |  | 2027-07-29 | 2027-08-25 |  |  |  |
| RHD4CZ1L101IRR1104 |  | Excavation works for HDPE Pipline 315 mm - (RD-L-10/1)-Z1-L101-IRR | 6d | 2027-07-29 | 2027-08-04 | RHD4ENSDZ1APPIRR140, RHD4ENMSRR2000, RHD4CZ1L101PT3200, RHD4CZ1L101PT1101, RHD4CZ4C031PT3201, RHD4CZ4L014IRR3203 |  | -196d |
| RHD4CZ1L101IRR1204 |  | Bedding works for HDPE Pipline 315 mm - (RD-L-10/1)-Z1-L101-IRR | 5d | 2027-08-05 | 2027-08-10 | RHD4CZ1L101IRR1104, RHD4CZ4C031CCTV1500, RHD4CZ5L016SL2400 |  | -196d |
| RHD4CZ1L101IRR1304 |  | Installing for HDPE Pipline 315 mm - (RD-L-10/1)-Z1-L101-IRR | 6d | 2027-08-11 | 2027-08-17 | RHD4PRSHLDOSIRR1000, RHD4PRSHLSTAGIRR1000, RHD4CZ1L101IRR1204, RHD4CZ4L014IRR3200, RHD4CZ9L05PT4500 |  | -196d |
| RHD4CZ1L101IRR1404 |  | Primary Test for HDPE Pipline 315 mm - (RD-L-10/1)-Z1-L101-IRR | 2d | 2027-08-18 | 2027-08-19 | RHD4CZ1L101IRR1304 |  | -196d |
| RHD4CZ1L101IRR1504 |  | Backfilling and warning tape works for HDPE Pipline 315 mm - (RD-L-10/1)-Z1-L101-IRR | 5d | 2027-08-21 | 2027-08-25 | RHD4CZ1L101IRR1500, RHD4CZ1L101IRR1404 |  | -196d |
|  | 622 | **RHD4-02-002-L101-(IRR)-HDPE Pipes - 200 mm diameter** |  |  |  |  |  |  |
|  | 628 | **RHD4-02-002-L101-(IRR)-Gate Valves (Direct Buried)** |  | 2027-08-18 | 2027-08-31 |  |  |  |
| RHD4CZ1L101IRR3100 |  | Installation for Direct Buried Gate Valves - (RD-L-10/1)-Z1-L101-IRR | 6d | 2027-08-18 | 2027-08-24 | RHD4PRSHLDOSIRR1100, RHD4PRSHLSTAGIRR1100, RHD4CZ1L101IRR1304 SS, RHD4CZ1L101IRR1304 FF, RHD4CZ1L101PT1101, RHD4CZ1L101PT1101 FF, RHD4CZ1L101PT1100, RHD4CZ1L101PT1100 FF, RHD4CZ1L101IRR1304, RHD4CZ9L06ST3500, RHD4CZ3L122RW3002 FF, RHD4CZ3C083RW3001 FF |  | -194d |
| RHD4CZ1L101IRR3200 |  | Stem and Service box for Direct Buried Gate Valves - (RD-L-10/1)-Z1-L101-IRR | 6d | 2027-08-25 | 2027-08-31 | RHD4PRSHLDOSIRR1300, RHD4PRSHLSTAGIRR1300, RHD4CZ1L101IRR3100, RHD4CZ1L101PT1101, RHD4CZ1L101PT1100, RHD4CZ6A02RD7100 FF, RHD4CZ7A012ST8500, RHD4CZ4RA02CCTV1500 FF |  | -194d |
|  | 653 | **RHD4-02-002-Z1-L101-Medium Voltage Network - MV** |  | 2027-05-08 | 2027-06-20 |  |  |  |
|  | 654 | **RHD4-02-002-L101-(MV)-Medium Voltage cable trench** |  | 2027-05-08 | 2027-06-10 |  |  |  |
| RHD4CZ1L101MV1100 |  | Excavation for Medium Voltage Trench - (RD-L-10/1)-Z1-L101-MV | 13d | 2027-05-08 | 2027-05-26 | RHD4ENSDZ1APPMV150, RHD4CZ1L101RD3100, RHD4CZ2L011MV5400 |  | -198d |
| RHD4CZ1L101MV1200 |  | Trench Backfilling for Medium Voltage Network - (RD-L-10/1)-Z1-L101-MV | 13d | 2027-05-27 | 2027-06-10 | RHD4CZ1L101MV1100 |  | -198d |
|  | 655 | **RHD4-02-002-L101-(MV)-Medium Voltage duct banks** |  |  |  |  |  |  |
|  | 656 | **RHD4-02-002-L101-(MV)-Medium Voltage cables 3Cx 500 mm²** |  | 2027-05-27 | 2027-06-17 |  |  |  |
| RHD4CZ1L101MV3100 |  | Installation of Medium Voltage Cables 3Cx 500 mm² - (RD-L-10/1)-Z1-L101-MV | 6d | 2027-05-27 | 2027-06-02 | RHD4PRSHLDOSMV1100, RHD4ENMSMV2000, RHD4ENMSMV2010, RHD4PRSHLSTAGMV1100, RHD4CZ1L101MV1100 |  | -193d |
| RHD4CZ1L101MV3200 |  | Joints Installation of Medium Voltage Cables 3Cx 500 mm² - (RD-L-10/1)-Z1-L101-MV | 2d | 2027-06-03 | 2027-06-05 | RHD4PRSHLDOSMV1300, RHD4PRSHLSTAGMV1300, RHD4CZ1L101MV3100 |  | -193d |
| RHD4CZ1L101MV3300 |  | Testing of Medium Voltage Cables 3Cx 500 mm² - (RD-L-10/1)-Z1-L101-MV | 6d | 2027-06-12 | 2027-06-17 | RHD4CZ1L101MV3200, RHD4CZ1L101MV1200, RHD4CZ1L101MV3100, RHD4CZ1L101MV1100 |  | -198d |
|  | 5387 | **RHD4-02-002-C062-(MV)-Medium Voltage cables 3Cx 50 mm²** |  | 2027-06-19 | 2027-06-20 |  |  |  |

| ID | WBS | Task | Duration | Start | Finish | Predecessors | Total float |
| --- | --- | --- | --- | --- | --- | --- | --- |
| RHD4CZ1L101MV3401 |  | Termination of Medium Voltage Cables 3Cx 50 mm² - (RD-L-10/1)-Z1-L101-MV | 2d | 2027-06-19 | 2027-06-20 | RHD4CZ1L101MV3300 | -129d |
|  | 660 | **RHD4-02-002-Z1-L101-Low Voltage Network - LV** |  | 2027-08-26 | 2027-10-02 |  |  |
|  | 661 | **RHD4-02-002-L101-(LV)-Low Voltage duct banks** |  | 2027-08-26 | 2027-09-04 |  |  |
| RHD4CZ1L101LV2100 |  | Excavation of Duct Banks for Low Voltage Network - (RD-L-10/1)-Z1-L101-LV | 2d | 2027-08-26 | 2027-08-28 | RHD4ENSDZ1APPLV160, RHD4CZ1L101IRR3201, RHD4CZ1L101IRR1504 | -196d |
| RHD4CZ1L101LV2200 |  | Installation of Duct Banks for Low Voltage Network - (RD-L-10/1)-Z1-L101-LV | 2d | 2027-08-29 | 2027-08-30 | RHD4PRSHLDOSLV1000, RHD4PRSHLSTAGLV1000, RHD4CZ1L101LV2100 | -196d |
| RHD4CZ1L101LV2300 |  | Pouring of Duct Banks for Low Voltage Network - (RD-L-10/1)-Z1-L101-LV | 2d | 2027-08-31 | 2027-09-01 | RHD4CZ1L101LV2200 | -196d |
| RHD4CZ1L101LV2400 |  | Backfilling of Duct Banks for Low Voltage Network - (RD-L-10/1)-Z1-L101-LV | 2d | 2027-09-02 | 2027-09-04 | RHD4CZ1L101LV2300 | -196d |
|  | 662 | **RHD4-02-002-L101-(LV)-Low Voltage Drawpit** |  | 2027-09-02 | 2027-09-06 |  |  |
| RHD4CZ1L101LV5100 |  | Excavation of Drawpit size 900x900x1000mm for Low Voltage Network - (RD-L-10/1)-Z1-L101-LV | 2d | 2027-09-02 | 2027-09-04 | RHD4ENSDZ1APPLV160, RHD4CZ1L101LV2300, RHD4CZ1L101MV3401 | -188d |
| RHD4CZ1L101LV5200 |  | Installation of Drawpit size 900x900x1000mm for Low Voltage Network - (RD-L-10/1)-Z1-L101-LV | 2d | 2027-09-05 | 2027-09-06 | RHD4PRSHLDOSLV1400, RHD4PRSHLSTAGLV1400, RHD4CZ1L101LV5100 | -188d |
|  | 663 | **RHD4-02-002-L101-(LV)-Low Voltage cables** |  | 2027-09-05 | 2027-10-02 |  |  |
| RHD4CZ1L101LV3100 |  | Excavation for Low Voltage Cables for Low Voltage Network - (RD-L-10/1)-Z1-L101-LV | 7d | 2027-09-05 | 2027-09-12 | RHD4ENSDZ1APPLV160, RHD4CZ1L101LV2400, RHD4CZ1L101MV1200, RHD4CZ1L101MV3401, RHD4CZ1L101MV3401 FF | -190d |
| RHD4CZ1L101LV3200 |  | Cable Laying of Low Voltage Cables for Low Voltage Network - (RD-L-10/1)-Z1-L101-LV | 6d | 2027-09-13 | 2027-09-19 | RHD4PRSHLDOSLV1100, RHD4ENMSLV2000, RHD4ENMSLV2010, RHD4PRSHLSTAGLV1100, RHD4CZ1L101LV3100 | -190d |
| RHD4CZ1L101LV3300 |  | Warning tape and Backfill for Low Voltage Cables for Low Voltage Network - (RD-L-10/1)-Z1-L101-LV | 6d | 2027-09-20 | 2027-09-27 | RHD4CZ1L101LV3200, RHD4CZ1L101LV5200 | -190d |
| RHD4CZ1L101LV3400 |  | Testing of Low Voltage Cables for Low Voltage Network - (RD-L-10/1)-Z1-L101-LV | 4d | 2027-09-28 | 2027-10-02 | RHD4CZ1L101LV3300 | -190d |
|  | 666 | **RHD4-02-002-Z1-L101-Street Lighting Network - SL** |  | 2027-08-26 | 2027-10-30 |  |  |
|  | 667 | **RHD4-02-002-L101-(SL)-Street Lighting duct banks** |  | 2027-08-26 | 2027-09-06 |  |  |
| RHD4CZ1L101SL2100 |  | Excavation of Duct Banks for Street Lighting Network - (RD-L-10/1)-Z1-L101-SL | 2d | 2027-08-26 | 2027-08-28 | RHD4ENSDZ1APPSL170, RHD4CZ1L101IRR1504 | -194d |
| RHD4CZ1L101SL2200 |  | Installation of Duct Banks for Street Lighting Network - (RD-L-10/1)-Z1-L101-SL | 2d | 2027-08-31 | 2027-09-01 | RHD4PRSHLDOSSL1000, RHD4PRSHLSTAGSL1000, RHD4CZ1L101SL2100, RHD4CZ1L101LV2200 | -196d |
| RHD4CZ1L101SL2300 |  | Pouring of Duct Banks for Street Lighting Network - (RD-L-10/1)-Z1-L101-SL | 2d | 2027-09-02 | 2027-09-04 | RHD4CZ1L101SL2200, RHD4CZ1L101LV2300 | -196d |
| RHD4CZ1L101SL2400 |  | Backfilling of Duct Banks for Street Lighting Network - (RD-L-10/1)-Z1-L101-SL | 2d | 2027-09-05 | 2027-09-06 | RHD4CZ1L101SL2300, RHD4CZ1L101LV2400 | -196d |
|  | 668 | **RHD4-02-002-L101-(SL)-Street Lighting Drawpit** |  | 2027-09-07 | 2027-09-11 |  |  |
| RHD4CZ1L101SL5100 |  | Excavation of Drawpit size 600x600x900mm for Street Lighting Network - (RD-L-10/1)-Z1-L101-SL | 2d | 2027-09-07 | 2027-09-08 | RHD4ENSDZ1APPSL170, RHD4CZ1L101MV3401, RHD4CZ1L101LV5200 | -188d |
| RHD4CZ1L101SL5200 |  | Installation of Drawpit size 600x600x900mm for Street Lighting Network - (RD-L-10/1)-Z1-L101-SL | 2d | 2027-09-09 | 2027-09-11 | RHD4PRSHLDOSSL1400, RHD4PRSHLSTAGSL1400, RHD4CZ1L101SL5100 | -188d |
|  | 669 | **RHD4-02-002-L101-(SL)-Street Lighting cables** |  | 2027-09-21 | 2027-10-18 |  |  |
| RHD4CZ1L101SL3100 |  | Excavation for Street Lighting Cables for Street Lighting Network - (RD-L-10/1)-Z1-L101-SL | 7d | 2027-09-21 | 2027-09-29 | RHD4ENSDZ1APPSL170, RHD4CZ1L101SL1300, RHD4CZ1L101MV3300, RHD4CZ1L101SL5200 | -196d |
| RHD4CZ1L101SL3200 |  | Cable Laying of Street Lighting Cables for Street Lighting Network - (RD-L-10/1)-Z1-L101-SL | 6d | 2027-09-30 | 2027-10-06 | RHD4PRSHLDOSSL1100, RHD4ENMSSL2000, RHD4ENMSSL2010, RHD4PRSHLSTAGSL1100, RHD4CZ1L101SL3100 | -196d |
| RHD4CZ1L101SL3300 |  | Warning tape and Backfill for Street Lighting Cables for Street Lighting Network - (RD-L-10/1)-Z1-L101-SL | 6d | 2027-10-07 | 2027-10-13 | RHD4CZ1L101SL3200 | -196d |
| RHD4CZ1L101SL3400 |  | Testing of Street Lighting Cables for Street Lighting Network - (RD-L-10/1)-Z1-L101-SL | 4d | 2027-10-14 | 2027-10-18 | RHD4CZ1L101SL3300 | -196d |
|  | 670 | **RHD4-02-002-L101-(SL)-Street Lighting Poles** |  | 2027-09-07 | 2027-10-30 |  |  |
| RHD4CZ1L101SL1100 |  | Excavation for RC Base for Lighting Poles for Street Lighting Network - (RD-L-10/1)-Z1-L101-SL | 4d | 2027-09-07 | 2027-09-11 | RHD4ENSDZ1APPSL170, RHD4CZ1L101SL2400, RHD4CZ1L101MV3200, RHD4CZ1L101MV3401 | -196d |
| RHD4CZ1L101SL1200 |  | Installation for RC Base for Lighting Poles for Street Lighting Network - (RD-L-10/1)-Z1-L101-SL | 4d | 2027-09-12 | 2027-09-15 | RHD4CZ1L101SL1100 | -196d |
| RHD4CZ1L101SL1300 |  | Backfill for RC Base for Lighting Poles for Street Lighting Network - (RD-L-10/1)-Z1-L101-SL | 4d | 2027-09-16 | 2027-09-20 | RHD4PRLOLSTACCTV1001, RHD4CZ1L101SL1200 | -196d |
| RHD4CZ1L101SL1400 |  | Installation for Lighting Poles for Street Lighting Network - (RD-L-10/1)-Z1-L101-SL | 6d | 2027-10-19 | 2027-10-25 | RHD4PRSHLDOSSL1200, RHD4ENMSSL2000, RHD4CZ1L101LV3400, RHD4ENMSSL2010, RHD4PRSHLSTAGSL1200, RHD4CZ1L101SL1300, RHD4CZ1L101SL3400 | -196d |
| RHD4CZ1L101SL1500 |  | Luminaire Installation for Lighting Poles for Street Lighting Network - (RD-L-10/1)-Z1-L101-SL | 4d | 2027-10-26 | 2027-10-30 | RHD4PRSHLDOSSL1300, RHD4PRSHLSTAGSL1300, RHD4CZ1L101SL1400 | -194d |
|  | 672 | **RHD4-02-002-L101-(SL)-Street Lighting Earthing System** |  | 2027-10-26 | 2027-10-27 |  |  |
| RHD4CZ1L101SL6100 |  | Installation of Earthing for Lighting Poles and Fedder Pillers for Street Lighting Network - (RD-L-10/1)-Z1-L101-SL | 2d | 2027-10-26 | 2027-10-27 | RHD4ENMSER2000, RHD4ENMSER2010, RHD4CZ1L101SL1400, RHD4CZ1L101SL3300 | -196d |
|  | 678 | **RHD4-02-002-Z1-L101-Telecommunications Network - TC** |  | 2027-10-28 | 2027-12-12 |  |  |
|  | 679 | **RHD4-02-002-L101-(TC)-Telecommunications Ducts** |  | 2027-10-28 | 2027-12-12 |  |  |
| RHD4CZ1L101TC2100 |  | Excavation of HDPE Ducts for Telecom Network - (RD-L-10/1)-Z1-L101-TC | 11d | 2027-10-28 | 2027-11-09 | RHD4ENSDZ1APPTC190, RHD4CZ1L101IRR1504, RHD4CZ1L101SL6100 | -196d |
| RHD4CZ1L101TC2200 |  | Installation of HDPE Ducts for Telecom Network - (RD-L-10/1)-Z1-L101-TC | 17d | 2027-11-10 | 2027-11-29 | RHD4PRSHLDOSTC1000, RHD4PRSHLSTAGTC1000, RHD4CZ1L101TC2100 | -196d |
| RHD4CZ1L101TC2400 |  | Backfilling of HDPE Ducts for Telecom Network - (RD-L-10/1)-Z1-L101-TC | 11d | 2027-11-30 | 2027-12-12 | RHD4CZ1L101TC2200, RHD4CZ1L101TC5200 | -196d |
|  | 680 | **RHD4-02-002-L101-(TC)-Telecommunications Manholes** |  | 2027-11-10 | 2027-11-21 |  |  |
| RHD4CZ1L101TC5100 |  | Excavation for Manholes for Telecom Network - (RD-L-10/1)-Z1-L101-TC | 5d | 2027-11-10 | 2027-11-15 | RHD4ENSDZ1APPTC190, RHD4CZ1L101TC2100 | -189d |
| RHD4CZ1L101TC5200 |  | Installation of Manholes for Telecom Network - (RD-L-10/1)-Z1-L101-TC | 5d | 2027-11-16 | 2027-11-21 | RHD4PRSHLDOSTC1200, RHD4PRSHLSTAGTC1200, RHD4CZ1L101TC5100, RHD4CZ1L101TC2200 SS | -189d |
|  | 681 | **RHD4-02-002-L101-(TC)-Telecomminications Road Crossings** |  |  |  |  |  |
|  | 682 | **RHD4-02-002-Z1-L101-Information and Communication Technologies - ICT** |  | 2027-03-17 | 2027-12-01 |  |  |
|  | 683 | **RHD4-02-002-L101-(ICT)-Information and Communication Technologies Ducts** |  | 2027-10-19 | 2027-12-01 |  |  |
| RHD4CZ1L101ICT2100 |  | Excavation of HDPE Ducts for ICT Network - (RD-L-10/1)-Z1-L101-ICT | 11d | 2027-10-19 | 2027-10-31 | RHD4ENSDZ1APPICT200, RHD4CZ1L101ICT3400, RHD4CZ1L101SL3400 | -195d |
| RHD4CZ1L101ICT2200 |  | Installation of HDPE Ducts for ICT Network - (RD-L-10/1)-Z1-L101-ICT | 16d | 2027-11-01 | 2027-11-18 | RHD4PRSHLDOSICT1000, RHD4PRSHLSTAGICT1000, RHD4CZ1L101ICT2100 | -187d |
| RHD4CZ1L101ICT2400 |  | Backfilling of HDPE Ducts for ICT Network - (RD-L-10/1)-Z1-L101-ICT | 11d | 2027-11-20 | 2027-12-01 | RHD4CZ1L101ICT2200 | -187d |
|  | 684 | **RHD4-02-002-L101-(ICT)-Information and Communication Technologies Manholes** |  | 2027-11-01 | 2027-11-11 |  |  |
| RHD4CZ1L101ICT5100 |  | Excavation for Manholes for ICT Network - (RD-L-10/1)-Z1-L101-ICT | 5d | 2027-11-01 | 2027-11-06 | RHD4ENSDZ1APPICT200, RHD4CZ1L101ICT2100 | -195d |
| RHD4CZ1L101ICT5200 |  | Installation of Manholes for ICT Network - (RD-L-10/1)-Z1-L101-ICT | 5d | 2027-11-07 | 2027-11-11 | RHD4PRSHLDOSICT1200, RHD4PRSHLSTAGICT1200, RHD4CZ1L101ICT5100, RHD4CZ1L101PT4500 | -195d |
|  | 685 | **RHD4-02-002-L101-(ICT)-Information and Communication Technologies Road Crossings** |  | 2027-03-17 | 2027-03-25 |  |  |
| RHD4CZ1L101ICT3100 |  | Excavation for Road Crossings for ICT Network - (RD-L-10/1)-Z1-L101-ICT | 2d | 2027-03-17 | 2027-03-18 | RHD4ENSDZ1APPICT200, RHD4CZ1L101ST1505 | -185d |
| RHD4CZ1L101ICT3200 |  | Installation of Road Crossings for ICT Network - (RD-L-10/1)-Z1-L101-ICT | 2d | 2027-03-20 | 2027-03-21 | RHD4PRSHLDOSICT1100, RHD4PRSHLSTAGICT1100, RHD4CZ1L101ICT3100 | -185d |
| RHD4CZ1L101ICT3300 |  | Pouring of Road Crossings for ICT Network - (RD-L-10/1)-Z1-L101-ICT | 2d | 2027-03-22 | 2027-03-23 | RHD4CZ1L101ICT3200 | -185d |
| RHD4CZ1L101ICT3400 |  | Backfilling of Road Crossings for ICT Network - (RD-L-10/1)-Z1-L101-ICT | 2d | 2027-03-24 | 2027-03-25 | RHD4CZ1L101ICT3300 | -185d |
|  | 673 | **RHD4-02-002-Z1-L101-Landscape Network - LS** |  |  |  |  |  |
|  | 674 | **RHD4-02-002-L101-(LS)-Landscape Lighting cables** |  |  |  |  |  |
|  | 675 | **RHD4-02-002-L101-(LS)-Landscape Feeder Pillars** |  |  |  |  |  |
|  | 676 | **RHD4-02-002-L101-(LS)-Landscape Bollard Poles** |  |  |  |  |  |
|  | 677 | **RHD4-02-002-L101-(LS)-Landscape Feeder Pillars Earthing** |  |  |  |  |  |
|  | 686 | **RHD4-02-002-Z1-L101-Security Network - CCTV** |  | 2027-12-13 | 2028-01-26 |  |  |
|  | 687 | **RHD4-02-002-L101-(CCTV)-Civil Works** |  | 2027-12-13 | 2027-12-23 |  |  |
| RHD4CZ1L101CCTV2100 |  | Civil Works for Security Network - (RD-L-10/1)-Z1-L101-CCTV | 10d | 2027-12-13 | 2027-12-23 | RHD4CZ1L101ICT2400, RHD4CZ1L101TC2400 | -196d |
|  | 688 | **RHD4-02-002-L101-(CCTV)-CCTV Poles** |  | 2027-12-25 | 2028-01-04 |  |  |
| RHD4CZ1L101CCTV1100 |  | Excavation for RC Base for CCTV Poles for Security Network - (RD-L-10/1)-Z1-L101-CCTV | 2d | 2027-12-25 | 2027-12-26 | RHD4ENSDZ1APPCCTV210, RHD4CZ1L101CCTV2100 | -196d |
| RHD4CZ1L101CCTV1200 |  | Installation for RC Base for CCTV Poles for Security Network - (RD-L-10/1)-Z1-L101-CCTV | 2d | 2027-12-27 | 2027-12-28 | RHD4CZ1L101CCTV1100 | -196d |

| ID | WBS | Task | Duration | Start | Finish | Predecessors | Complete | Total float |
| --- | --- | --- | --- | --- | --- | --- | --- | --- |
| RHD4CZ1L101CCTV1300 |  | Backfill for RC Base for CCTV Poles for Security Network - (RD-L-10/1)-Z1-L101-CCTV | 2d | 2027-12-29 | 2027-12-30 | RHD4CZ1L101CCTV1200 |  | -196d |
| RHD4CZ1L101CCTV1400 |  | Installation for CCTV Poles for Security Network - (RD-L-10/1)-Z1-L101-CCTV | 2d | 2028-01-01 | 2028-01-02 | RHD4PRSHLDOSCCTV1000, RHD4PRSHLSTACCTV1000, RHD4CZ1L101CCTV1300 |  | -196d |
| RHD4CZ1L101CCTV1500 |  | Protection post Installation for CCTV Poles for Security Network - (RD-L-10/1)-Z1-L101-CCTV | 2d | 2028-01-03 | 2028-01-04 | RHD4CZ1L101CCTV1400 |  | -194d |
|  | 689 | **RHD4-02-002-L101-(CCTV)-Camera** |  | 2028-01-08 | 2028-01-09 |  |  |  |
| RHD4CZ1L101CCTV3100 |  | Installation for Cameras for Security Network - (RD-L-10/1)-Z1-L101-CCTV | 2d | 2028-01-08 | 2028-01-09 | RHD4PRSHLDOSCCTV1100, RHD4PRSHLSTACCTV1100, RHD4CZ1L101CCTV1400, RHD4CZ1L101CCTV4100, RHD4CZ1L101CCTV4200 |  | -193d |
|  | 690 | **RHD4-02-002-L101-(CCTV)-Power and Infrastructure** |  | 2028-01-03 | 2028-01-06 |  |  |  |
| RHD4CZ1L101CCTV4100 |  | Installation of Power outlet, UPS and midspan for PTZ Camerafor Cameras for Security Network - (RD-L-10/1)-Z1-L101-CCTV | 2d | 2028-01-03 | 2028-01-04 | RHD4PRSHLDOSCCTV1300, RHD4PRSHLSTACCTV1300, RHD4CZ1L101CCTV1400 |  | -196d |
| RHD4CZ1L101CCTV4200 |  | Short Range Wireless PoP wireless Bridgefor CCTV Poles for Security Network - (RD-L-10/1)-Z1-L101-CCTV | 2d | 2028-01-05 | 2028-01-06 | RHD4CZ1L101CCTV4100 |  | -196d |
|  | 692 | **RHD4-02-002-L101-(CCTV)-CCTV Panels and Components** |  | 2028-01-10 | 2028-01-26 |  |  |  |
| RHD4CZ1L101CCTV6100 |  | Installation for CCTV Panels for Security Network - (RD-L-10/1)-Z1-L101-CCTV | 15d | 2028-01-10 | 2028-01-26 | RHD4PRSHLDOSCCTV1200, RHD4PRSHLSTACCTV1200, RHD4PRLOLSTACCTV1001, RHD4CZ1L101CCTV4200, RHD4CZ1L101CCTV3100 |  | -193d |
|  | 325 | **RHD4-02-002-Z1-C081** |  | 2026-09-15 | 2028-03-28 |  |  |  |
|  | 356 | **RHD4-02-002-Z1-C081-Crossings Sewage Network - SWCr** |  |  |  |  |  |  |
|  | 366 | **RHD4-02-002-C081-(SWCr)-MH Works - 1200 mm diameter** |  |  |  |  |  |  |
|  | 362 | **RHD4-02-002-C081-(SWCr)-UPVC Pipes - 200 mm diameter** |  |  |  |  |  |  |
|  | 400 | **RHD4-02-002-Z1-C081-Crossings Potable Network - PTCr** |  |  |  |  |  |  |
|  | 403 | **RHD4-02-002-C081-(PTCr)-HDPE Pipes - 200 mm diameter** |  |  |  |  |  |  |
|  | 406 | **RHD4-02-002-C081-(PTCr)-Gate Valves (Direct Buried)** |  |  |  |  |  |  |
|  | 413 | **RHD4-02-002-C081-(PTCr)-Fire Hydrant** |  |  |  |  |  |  |
|  | 447 | **RHD4-02-002-Z1-C081-Crossings Irrigation Network - IRRC** |  |  |  |  |  |  |
|  | 452 | **RHD4-02-002-C081-(IRRC)-HDPE Pipes - 315 mm diameter** |  |  |  |  |  |  |
|  | 448 | **RHD4-02-002-C081-(IRRC)-HDPE Pipes - 160 mm diameter** |  |  |  |  |  |  |
|  | 456 | **RHD4-02-002-C081-(IRRC)-Gate Valves (Direct Buried)** |  |  |  |  |  |  |
|  | 457 | **RHD4-02-002-C081-(IRRC)-Butterfly Valve Chamber** |  |  |  |  |  |  |
|  | 458 | **RHD4-02-002-C081-(IRRC)-Butterfly Valves** |  |  |  |  |  |  |
|  | 461 | **RHD4-02-002-C081-(IRRC)-Air Valve Chamber** |  |  |  |  |  |  |
|  | 462 | **RHD4-02-002-C081-(IRRC)-Air Valves** |  |  |  |  |  |  |
|  | 504 | **RHD4-02-002-Z1-C081-Road Works - RD** |  | 2027-02-17 | 2028-03-28 |  |  |  |
|  | 505 | **RHD4-02-002-C081-(RD)-Subgrade** |  | 2027-02-17 | 2027-02-28 |  |  |  |
| RHD4CZ1C081RD1100 |  | Supply, lay and compaction subgrade compacted thickness 300 mm for Roads - (RD-C-8 /1)-Z1-C081-RD | 9d | 2027-02-17 | 2027-02-28 | RHD4ENSDZ1APPRD220, RHD4ENSDZ1APPEW100, RHD4CZ1C081ST1504, RHD4CZ1C081ST7300, RHD4CZ1C081ST8300 |  | -151d |
|  | 506 | **RHD4-02-002-C081-(RD)-Aggregate Base Course** |  | 2027-03-01 | 2027-03-08 |  |  |  |
| RHD4CZ1C081RD2100 |  | Supply, lay and compaction Aggregate base course compacted thickness 300 mmfor Roads - (RD-C-8 /1)-Z1-C081-RD | 7d | 2027-03-01 | 2027-03-08 | RHD4PRSHLDOSRD1000, RHD4PRSHLSTAGRD1000, RHD4CZ1C081RD1100 |  | -151d |
|  | 507 | **RHD4-02-002-C081-(RD)-Bituminous base course Two Layers, including (MC1)&(RC2)** |  | 2027-03-13 | 2027-11-17 |  |  |  |
| RHD4CZ1C081RD3100 |  | Supply, lay and Asphaltic base course including Prime Coat (MC1) for 1st Layer - (RD-C-8 /1)-Z1-C081-RD | 3d | 2027-03-13 | 2027-03-15 | RHD4PRSHLDOSRD1100, RHD4ENMSASPH2000, RHD4ENMSASPH2010, RHD4PRSHLSTAGRD1100, RHD4CZ1C081RD2100 |  | -151d |
| RHD4CZ1C081RD3200 |  | Supply, lay and Asphaltic base course including Tack Coat (RC2) for 2nd Layer - (RD-C-8 /1)-Z1-C081-RD | 3d | 2027-11-15 | 2027-11-17 | RHD4PRSHLDOSRD1100, RHD4PRSHLSTAGRD1100, RHD4CZ1C081RD3100, RHD4CZ1C081CCTV6100 |  | -100d |
|  | 509 | **RHD4-02-002-C081-(RD)-Precast Concrete Curb** |  | 2027-11-18 | 2027-11-28 |  |  |  |
| RHD4CZ1C081RD5100 |  | Supply and installation Precast Concrete Kerb for Roads - (RD-C-8 /1)-Z1-C081-RD | 9d | 2027-11-18 | 2027-11-28 | RHD4PRSHLDOSRD1200, RHD4ENMSRD2000, RHD4ENMSRD2010, RHD4PRSHLSTAGRD1200, RHD4CZ1C081RD3200 |  | -100d |
|  | 512 | **RHD4-02-002-C081-(RD)-Traffic Signage** |  | 2028-02-14 | 2028-02-21 |  |  |  |
| RHD4CZ1C081RD8100 |  | Installation of Traffic Signage for Road Network - (RD-C-8 /1)-Z1-C081-RD | 7d | 2028-02-14 | 2028-02-21 | RHD4PRSHLDOSRD1600, RHD4PRSHLSTAGRD1600, RHD4CZ1C081RD5100, RHD4CZ1C081TC2400, RHD4CZ1C081ICT2400, RHD4CZ1L101RD8100, RHD4CZ1C081IRR1500 |  | -166d |
|  | 510 | **RHD4-02-002-C081-(RD)-Precast Interlocking Block Pavers** |  |  |  |  |  |  |
|  | 508 | **RHD4-02-002-C081-(RD)-Bituminous concrete wearing course including tack coat (RC2)** |  | 2028-03-09 | 2028-03-11 |  |  |  |
| RHD4CZ1C081RD4100 |  | Supply, lay and compaction Asphaltic wearing course including tack Coat (RC2)for Road Network - (RD-C-8 /1)-Z1-C081-RD | 2d | 2028-03-09 | 2028-03-11 | RHD4CZ1L101RD4100, RHD4CZ1C081RD5100 |  | -175d |
|  | 511 | **RHD4-02-002-C081-(RD)-Pavement Marking** |  | 2028-03-18 | 2028-03-28 |  |  |  |
| RHD4CZ1C081RD7100 |  | Pavement Markings for Road Network - (RD-C-8 /1)-Z1-C081-RD | 10d | 2028-03-18 | 2028-03-28 | RHD4PRSHLDOSRD1500, RHD4PRSHLSTAGRD1500, RHD4CZ1C081RD4100, RHD4CZ1L101RD7100 |  | -180d |
|  | 329 | **RHD4-02-002-Z1-C081-Storm Network - ST** |  | 2026-09-15 | 2027-03-27 |  |  |  |
|  | 5253 | **RHD4-02-002-C081-(ST)-GRP Pipes - 800 mm diameter** |  | 2026-09-20 | 2027-01-30 |  |  |  |
| RHD4CZ1C081ST1104 |  | Excavation works for GRP Pipe Line 800 mm - (RD-C-8 /1)-Z1-C081-ST | 2d | 2026-09-20 A | 2026-10-17 A | RHD4CZ1C081RW2000, RHD4PRSHLSTAGST1000 | 100% |  |
| RHD4CZ1C081ST1204 |  | Bedding works for GRP Pipe Line 800 mm - (RD-C-8 /1)-Z1-C081-ST | 2d | 2026-10-24 A | 2026-10-25 A | RHD4CZ1C081ST1104 | 100% |  |
| RHD4CZ1C081ST1304 |  | Installing for GRP Pipe Line 800 mm - (RD-C-8 /1)-Z1-C081-ST | 2d | 2026-10-26 A | 2026-10-27 A | RHD4CZ1C081ST1204 | 100% |  |
| RHD4CZ1C081ST1404 |  | Primary Test for GRP Pipe Line 800 mm - (RD-C-8 /1)-Z1-C081-ST | 2d | 2027-01-26 | 2027-01-27 | RHD4CZ1C081ST1304 |  | -164d |
| RHD4CZ1C081ST1504 |  | Backfilling and warning tape works for GRP Pipe Line 800 mm - (RD-C-8 /1)-Z1-C081-ST | 2d | 2027-01-28 | 2027-01-30 | RHD4CZ1C081ST1404 |  | -164d |
|  | 346 | **RHD4-02-002-C081-(ST)-MH Works - 1200 mm diameter** |  | 2026-10-03 | 2027-02-17 |  |  |  |
| RHD4CZ1C081ST3100 |  | Excavation and PC Blinding works for MH 1200 mm - (RD-C-8 /1)-Z1-C081-ST | 5d | 2026-10-03 A | 2026-10-17 A | RHD4ENSDZ1APPST110, RHD4ENMSST2000, RHD4ENMSST2010, RHD4CZ1C081ST1104 | 100% |  |
| RHD4CZ1C081ST3200 |  | Installation of Base for MH 1200 mm - (RD-C-8 /1)-Z1-C081-ST | 5d | 2027-01-26 | 2027-01-31 | RHD4PRSHLSTAGST1600, RHD4CZ1C081ST3100 |  | -150d |
| RHD4CZ1C081ST3300 |  | MH Ring and C.Slab works and Backfilling works for MH 1200 mm - (RD-C-8 /1)-Z1-C081-ST | 5d | 2027-02-01 | 2027-02-06 | RHD4PRSHLDOSST1600, RHD4CZ1C081ST3200 |  | -150d |
| RHD4CZ1C081ST3400 |  | Steel Cover for MH 1200 mm - (RD-C-8 /1)-Z1-C081-ST | 5d | 2027-02-07 | 2027-02-11 | RHD4PRSHLDOSST1700, RHD4PRSHLSTAGST1700, RHD4CZ1C081ST3300 |  | -150d |
| RHD4CZ1C081ST3500 |  | Finishing, Benching, Testing works for MH 1200 mm - (RD-C-8 /1)-Z1-C081-ST | 5d | 2027-02-13 | 2027-02-17 | RHD4CZ1C081ST3400 |  | -150d |
|  | 347 | **RHD4-02-002-C081-(ST)-MH Works - 1500 mm diameter** |  | 2026-10-10 | 2027-03-27 |  |  |  |
| RHD4CZ1C081ST3101 |  | Excavation and PC Blinding works for MH 1500 mm - (RD-C-8 /1)-Z1-C081-ST | 4d | 2026-10-10 A | 2027-01-30 | RHD4ENSDZ1APPST110, RHD4ENMSST2000, RHD4CZ1C081ST3100 | 60% | -145d |
| RHD4CZ1C081ST3201 |  | Installation of Base for MH 1500 mm - (RD-C-8 /1)-Z1-C081-ST | 4d | 2027-02-01 | 2027-02-04 | RHD4PRSHLSTAGST1600, RHD4CZ1C081ST3101, RHD4CZ1C081ST3200 |  | -146d |
| RHD4CZ1C081ST3301 |  | MH Ring and C.Slab works and Backfilling works for MH 1500 mm - (RD-C-8 /1)-Z1-C081-ST | 4d | 2027-02-07 | 2027-02-10 | RHD4PRSHLDOSST1600, RHD4CZ1C081ST3201, RHD4CZ1C081ST3300 |  | -147d |
| RHD4CZ1C081ST3401 |  | Steel Cover for MH 1500 mm - (RD-C-8 /1)-Z1-C081-ST | 2d | 2027-02-13 | 2027-02-14 | RHD4PRSHLDOSST1700, RHD4PRSHLSTAGST1700, RHD4CZ1C081ST3301, RHD4CZ1C081ST3400 |  | -148d |
| RHD4CZ1C081ST3501 |  | Finishing, Benching, Testing works for MH 1500 mm - (RD-C-8 /1)-Z1-C081-ST | 4d | 2027-03-23 | 2027-03-27 | RHD4CZ1C081ST3401, RHD4CZ1C081ST2500, RHD4CZ1C081ST3500 |  | -108d |
|  | 335 | **RHD4-02-002-C081-(ST)-GRP Pipes - 900 mm diameter** |  | 2026-09-15 | 2027-02-11 |  |  |  |
| RHD4CZ1C081ST1105 |  | Excavation works for GRP Pipe Line 900 mm - (RD-C-8 /1)-Z1-C081-ST | 2d | 2026-09-15 A | 2027-02-02 | RHD4ENSDZ1APPST110, RHD4CZ1C081ST3300 SS | 24% | -149d |
| RHD4CZ1C081ST1205 |  | Bedding works for GRP Pipe Line 900 mm - (RD-C-8 /1)-Z1-C081-ST | 2d | 2026-10-24 A | 2027-02-04 | RHD4CZ1C081ST1105 | 24% | -149d |
| RHD4CZ1C081ST1305 |  | Installing for GRP Pipe Line 900 mm - (RD-C-8 /1)-Z1-C081-ST | 2d | 2026-10-26 A | 2027-02-07 | RHD4PRSHLSTAGST1000, RHD4CZ1C081ST1205, RHD4PRSHLDOSST1600, RHD4PRSHLPOST1000, RHD4PRSHLDOSST1000 | 24% | -149d |
| RHD4CZ1C081ST1405 |  | Primary Test for GRP Pipe Line 900 mm - (RD-C-8 /1)-Z1-C081-ST | 2d | 2027-02-08 | 2027-02-09 | RHD4CZ1C081ST1305 |  | -149d |
| RHD4CZ1C081ST1505 |  | Backfilling and warning tape works for GRP Pipe Line 900 mm - (RD-C-8 /1)-Z1-C081-ST | 2d | 2027-02-10 | 2027-02-11 | RHD4CZ1C081ST1405 |  | -147d |
|  | 333 | **RHD4-02-002-C081-(ST)-GRP Pipes - 700 mm diameter** |  | 2026-09-17 | 2027-02-14 |  |  |  |
| RHD4CZ1C081ST1103 |  | Excavation works for GRP Pipe Line 700 mm - (RD-C-8 /1)-Z1-C081-ST | 2d | 2026-09-17 A | 2027-02-04 | RHD4ENSDZ1APPST110, RHD4CZ1C081ST1105 | 30% | -149d |

| ID | WBS | Task | Duration | Start | Finish | Predecessors | Complete | Total float |
| --- | --- | --- | --- | --- | --- | --- | --- | --- |
| RHD4CZ1C081ST1203 |  | Bedding works for GRP Pipe Line 700 mm - (RD-C-8 /1)-Z1-C081-ST | 2d | 2027-02-06 | 2027-02-07 | RHD4CZ1C081ST1103, RHD4CZ1C081ST1205 |  | -149d |
| RHD4CZ1C081ST1303 |  | Installing for GRP Pipe Line 700 mm - (RD-C-8 /1)-Z1-C081-ST | 2d | 2027-02-08 | 2027-02-09 | RHD4PRSHLSTAGST1000, RHD4CZ1C081ST1203, RHD4CZ1C081ST1305, RHD4PRSHLDOSST1600, RHD4PRSHLPOST1000, RHD4PRSHLDOSST1000 |  | -149d |
| RHD4CZ1C081ST1403 |  | Primary Test for GRP Pipe Line 700 mm - (RD-C-8 /1)-Z1-C081-ST | 2d | 2027-02-10 | 2027-02-11 | RHD4CZ1C081ST1303, RHD4CZ1C081ST1405 |  | -149d |
| RHD4CZ1C081ST1503 |  | Backfilling and warning tape works for GRP Pipe Line 700 mm - (RD-C-8 /1)-Z1-C081-ST | 2d | 2027-02-13 | 2027-02-14 | RHD4CZ1C081ST1403, RHD4CZ1C081ST1505 |  | -147d |
|  | 332 | **RHD4-02-002-C081-(ST)-GRP Pipes - 600 mm diameter** |  | 2026-09-19 | 2027-02-16 |  |  |  |
| RHD4CZ1C081ST1102 |  | Excavation works for GRP Pipe Line 600 mm - (RD-C-8 /1)-Z1-C081-ST | 2d | 2026-09-19 A | 2027-02-07 | RHD4ENSDZ1APPST110, RHD4CZ1C081ST1103 | 50% | -149d |
| RHD4CZ1C081ST1202 |  | Bedding works for GRP Pipe Line 600 mm - (RD-C-8 /1)-Z1-C081-ST | 2d | 2026-10-24 A | 2027-02-09 | RHD4CZ1C081ST1102, RHD4CZ1C081ST1203 | 10% | -149d |
| RHD4CZ1C081ST1302 |  | Installing for GRP Pipe Line 600 mm - (RD-C-8 /1)-Z1-C081-ST | 2d | 2026-10-26 A | 2027-02-11 | RHD4PRSHLSTAGST1000, RHD4CZ1C081ST1202, RHD4CZ1C081ST1303, RHD4PRSHLDOSST1600, RHD4PRSHLPOST1000, RHD4PRSHLDOSST1000 | 10% | -149d |
| RHD4CZ1C081ST1402 |  | Primary Test for GRP Pipe Line 600 mm - (RD-C-8 /1)-Z1-C081-ST | 2d | 2027-02-13 | 2027-02-14 | RHD4CZ1C081ST1302, RHD4CZ1C081ST1403 |  | -149d |
| RHD4CZ1C081ST1502 |  | Backfilling and warning tape works for GRP Pipe Line 600 mm - (RD-C-8 /1)-Z1-C081-ST | 2d | 2027-02-15 | 2027-02-16 | RHD4CZ1C081ST1402, RHD4CZ1C081ST1503 |  | -147d |
|  | 331 | **RHD4-02-002-C081-(ST)-GRP Pipes - 500 mm diameter** |  | 2026-09-22 | 2027-02-18 |  |  |  |
| RHD4CZ1C081ST1101 |  | Excavation works for GRP Pipe Line 500 mm - (RD-C-8 /1)-Z1-C081-ST | 2d | 2026-09-22 A | 2027-02-09 | RHD4ENSDZ1APPST110, RHD4CZ1C081ST1102 | 50% | -149d |
| RHD4CZ1C081ST1201 |  | Bedding works for GRP Pipe Line 500 mm - (RD-C-8 /1)-Z1-C081-ST | 2d | 2026-11-01 A | 2027-02-11 | RHD4CZ1C081ST1101, RHD4CZ1C081ST1202 | 50% | -149d |
| RHD4CZ1C081ST1301 |  | Installing for GRP Pipe Line 500 mm - (RD-C-8 /1)-Z1-C081-ST | 2d | 2026-11-03 A | 2027-02-14 | RHD4PRSHLSTAGST1000, RHD4CZ1C081ST1201, RHD4CZ1C081ST1302, RHD4PRSHLDOSST1600, RHD4PRSHLPOST1000, RHD4PRSHLDOSST1000 | 50% | -149d |
| RHD4CZ1C081ST1401 |  | Primary Test for GRP Pipe Line 500 mm - (RD-C-8 /1)-Z1-C081-ST | 2d | 2027-02-15 | 2027-02-16 | RHD4CZ1C081ST1301, RHD4CZ1C081ST1402 |  | -149d |
| RHD4CZ1C081ST1501 |  | Backfilling and warning tape works for GRP Pipe Line 500 mm - (RD-C-8 /1)-Z1-C081-ST | 2d | 2027-02-17 | 2027-02-18 | RHD4CZ1C081ST1401, RHD4CZ1C081ST1502 |  | -147d |
|  | 330 | **RHD4-02-002-C081-(ST)-GRP Pipes - 400 mm diameter** |  | 2026-09-22 | 2027-02-27 |  |  |  |
| RHD4CZ1C081ST1100 |  | Excavation works for GRP Pipe Line 400 mm - (RD-C-8 /1)-Z1-C081-ST | 4d | 2026-09-22 A | 2027-02-09 | RHD4ENSDZ1APPST110, RHD4CZ1C081ST1101 SS | 40% | -147d |
| RHD4CZ1C081ST1200 |  | Bedding works for GRP Pipe Line 400 mm - (RD-C-8 /1)-Z1-C081-ST | 4d | 2026-09-26 A | 2027-02-14 | RHD4CZ1C081ST1100, RHD4CZ1C081ST1201 | 40% | -149d |
| RHD4CZ1C081ST1300 |  | Installing for GRP Pipe Line 400 mm - (RD-C-8 /1)-Z1-C081-ST | 4d | 2026-10-01 A | 2027-02-16 | RHD4PRSHLSTAGST1000, RHD4CZ1C081ST1200, RHD4CZ1C081ST1301, RHD4PRSHLDOSST1600, RHD4PRSHLPOST1000, RHD4PRSHLDOSST1000 | 40% | -149d |
| RHD4CZ1C081ST1400 |  | Primary Test for GRP Pipe Line 400 mm - (RD-C-8 /1)-Z1-C081-ST | 4d | 2027-02-17 | 2027-02-21 | RHD4CZ1C081ST1300, RHD4CZ1C081ST1401 |  | -149d |
| RHD4CZ1C081ST1500 |  | Backfilling and warning tape works for GRP Pipe Line 400 mm - (RD-C-8 /1)-Z1-C081-ST | 4d | 2027-02-23 | 2027-02-27 | RHD4CZ1C081ST1400, RHD4CZ1C081ST1501 |  | -149d |
|  | 345 | **RHD4-02-002-C081-(ST)-UPVC Pipes - 400 mm diameter** |  |  |  |  |  |  |
|  | 344 | **RHD4-02-002-C081-(ST)-UPVC Pipes - 300 mm diameter** |  | 2026-10-17 | 2027-03-22 |  |  |  |
| RHD4CZ1C081ST2100 |  | Excavation works for UPVC Pipe Line 300 mm - (RD-C-8 /1)-Z1-C081-ST | 4d | 2026-10-17 A | 2027-03-03 | RHD4ENSDZ1APPST110, RHD4CZ1C081ST1500, RHD4CZ1C081ST3300, RHD4CZ1C081ST3301, RHD4CZ1C081ST1100 | 5% | -149d |
| RHD4CZ1C081ST2200 |  | Bedding works for UPVC Pipe Line 300 mm - (RD-C-8 /1)-Z1-C081-ST | 3d | 2027-03-04 | 2027-03-07 | RHD4CZ1C081ST2100 |  | -149d |
| RHD4CZ1C081ST2300 |  | Installing for UPVC Pipe Line 300 mm - (RD-C-8 /1)-Z1-C081-ST | 4d | 2027-03-08 | 2027-03-15 | RHD4PRSHLDOSST1100, RHD4PRSHLSTAGST1100, RHD4CZ1C081ST2200 |  | -149d |
| RHD4CZ1C081ST2400 |  | Primary Test for UPVC Pipe Line 300 mm - (RD-C-8 /1)-Z1-C081-ST | 2d | 2027-03-16 | 2027-03-17 | RHD4CZ1C081ST2300 |  | -146d |
| RHD4CZ1C081ST2500 |  | Backfilling and warning tape works for UPVC Pipe Line 300 mm - (RD-C-8 /1)-Z1-C081-ST | 4d | 2027-03-18 | 2027-03-22 | RHD4CZ1C081ST2400, RHD4CZ1C081ST6100 |  | -146d |
|  | 352 | **RHD4-02-002-C081-(ST)-Concrete Encasement** |  | 2027-03-16 | 2027-03-17 |  |  |  |
| RHD4CZ1C081ST6100 |  | Pipe Encasement for Storm Pipelines - (RD-C-8 /1)-Z1-C081-ST | 2d | 2027-03-16 | 2027-03-17 | RHD4CZ1C081ST2300 SS, RHD4CZ1C081ST2300 FF, RHD4CZ1C081ST2200, RHD4CZ1C081RD3100 |  | -151d |
|  | 353 | **RHD4-02-002-Z1-C081-Catch Basin - ST** |  | 2027-01-31 | 2027-03-03 |  |  |  |
|  | 354 | **RHD4-02-002-C081-(ST)-Single Catch Basin Works** |  | 2027-01-31 | 2027-03-01 |  |  |  |
| RHD4CZ1C081ST7100 |  | Excavation works for Single Catch Basin - (RD-C-8 /1)-Z1-C081-ST | 4d | 2027-01-31 | 2027-02-03 | RHD4ENSDZ1APPST110, RHD4CZ1C081ST1504 |  | -164d |
| RHD4CZ1C081ST7200 |  | PC Blinding, Installation and Pipe connection for Single Catch Basin - (RD-C-8 /1)-Z1-C081-ST | 4d | 2027-02-04 | 2027-02-08 | RHD4CZ1C081ST7100 |  | -164d |
| RHD4CZ1C081ST7300 |  | Rings & C.Slab & Final Backfill for Single Catch Basin - (RD-C-8 /1)-Z1-C081-ST | 5d | 2027-02-09 | 2027-02-14 | RHD4PRSHLDOSST1300, RHD4PRSHLSTAGST1300, RHD4CZ1C081ST7200 |  | -164d |
| RHD4CZ1C081ST7400 |  | Steel Cover for Single Catch Basin - (RD-C-8 /1)-Z1-C081-ST | 4d | 2027-02-15 | 2027-02-18 | RHD4PRSHLDOSST1700, RHD4CZ1C081ST7300 |  | -164d |
| RHD4CZ1C081ST7500 |  | Finishing and Insulation works for Single Catch Basin - (RD-C-8 /1)-Z1-C081-ST | 8d | 2027-02-20 | 2027-03-01 | RHD4CZ1C081ST7400 |  | -164d |
|  | 355 | **RHD4-02-002-C081-(ST)-Double Catch Basin Works** |  | 2027-01-31 | 2027-03-03 |  |  |  |
| RHD4CZ1C081ST8100 |  | Excavation works for Double Catch Basin - (RD-C-8 /1)-Z1-C081-ST | 2d | 2027-01-31 | 2027-02-01 | RHD4ENSDZ1APPST110, RHD4CZ1C081ST1504 |  | -147d |
| RHD4CZ1C081ST8200 |  | PC Blinding, Installation and Pipe connection for Double Catch Basin - (RD-C-8 /1)-Z1-C081-ST | 2d | 2027-02-09 | 2027-02-10 | RHD4CZ1C081ST8100, RHD4CZ1C081ST7200 |  | -153d |
| RHD4CZ1C081ST8300 |  | Rings & C.Slab & Final Backfillfor Double Catch Basin - (RD-C-8 /1)-Z1-C081-ST | 2d | 2027-02-15 | 2027-02-16 | RHD4PRSHLDOSST1300, RHD4PRSHLSTAGST1300, RHD4CZ1C081ST8200, RHD4CZ1C081ST7300 |  | -156d |
| RHD4CZ1C081ST8400 |  | Steel Cover for Double Catch Basin - (RD-C-8 /1)-Z1-C081-ST | 2d | 2027-02-20 | 2027-02-21 | RHD4PRSHLDOSST1700, RHD4CZ1C081ST8300, RHD4CZ1C081ST7400 |  | -158d |
| RHD4CZ1C081ST8500 |  | Finishing and Insulation works for Double Catch Basin - (RD-C-8 /1)-Z1-C081-ST | 2d | 2027-03-02 | 2027-03-03 | RHD4CZ1C081ST8400, RHD4CZ1C081ST7500 |  | -164d |
|  | 378 | **RHD4-02-002-Z1-C081-Sewage Network - SW** |  | 2027-03-18 | 2027-04-15 |  |  |  |
|  | 388 | **RHD4-02-002-C081-(SW)-MH Works - 1200 mm diameter** |  | 2027-03-18 | 2027-04-11 |  |  |  |
| RHD4CZ1C081SW3100 |  | Excavation and PC Blinding works for MH 1200 mm - (RD-C-8 /1)-Z1-C081-SW | 4d | 2027-03-18 | 2027-03-22 | RHD4ENSDZ1APPSW120, RHD4CZ1C081ST6100, RHD4CZ1C081ST8500, RHD4CZ1C081ST7500, RHD4CZ1C081ST8100, RHD4CZ1C081ST1500 |  | -151d |
| RHD4CZ1C081SW3200 |  | Installation of Base for MH 1200 mm - (RD-C-8 /1)-Z1-C081-SW | 5d | 2027-03-23 | 2027-03-28 | RHD4CZ1C081SW3100 |  | -151d |
| RHD4CZ1C081SW3300 |  | MH Ring and C.Slab works and Backfilling works for MH 1200 mm - (RD-C-8 /1)-Z1-C081-SW | 5d | 2027-03-29 | 2027-04-03 | RHD4PRSHLDOSSW1300, RHD4CZ1C081ST2500, RHD4PRSHLSTAGSW1300, RHD4CZ1C081SW3200 |  | -151d |
| RHD4CZ1C081SW3400 |  | Steel Cover for MH 1200 mm - (RD-C-8 /1)-Z1-C081-SW | 2d | 2027-04-04 | 2027-04-05 | RHD4PRSHLDOSSW1400, RHD4CZ1C081ST3501, RHD4PRSHLSTAGSW1400, RHD4CZ1C081SW3300 |  | -114d |
| RHD4CZ1C081SW3500 |  | Finishing, Benching, Testing works for MH 1200 mm - (RD-C-8 /1)-Z1-C081-SW | 5d | 2027-04-06 | 2027-04-11 | RHD4CZ1C081SW3400 |  | -114d |
|  | 384 | **RHD4-02-002-C081-(SW)-UPVC Pipes - 200 mm diameter** |  | 2027-03-23 | 2027-04-15 |  |  |  |
| RHD4CZ1C081SW2100 |  | Excavation works for UPVC Pipe Line 200 mm - (RD-C-8 /1)-Z1-C081-SW | 4d | 2027-03-23 | 2027-03-27 | RHD4ENSDZ1APPSW120, RHD4CZ1C081SW3100, RHD4CZ1C081SW3100 SS |  | -149d |
| RHD4CZ1C081SW2200 |  | Bedding works for UPVC Pipe Line 200 mm - (RD-C-8 /1)-Z1-C081-SW | 4d | 2027-03-28 | 2027-03-31 | RHD4CZ1C081SW2100, RHD4CZ1C081SW3100, RHD4CZ1C081SW3100 SS |  | -149d |
| RHD4CZ1C081SW2300 |  | Installing for UPVC Pipe Line 200 mm - (RD-C-8 /1)-Z1-C081-SW | 4d | 2027-04-04 | 2027-04-07 | RHD4PRSHLDOSSW1000, RHD4PRSHLSTAGSW1000, RHD4CZ1C081SW2200, RHD4CZ1C081SW3300, RHD4CZ1C081SW3300 SS |  | -151d |
| RHD4CZ1C081SW2400 |  | Primary Test for UPVC Pipe Line 200 mm - (RD-C-8 /1)-Z1-C081-SW | 3d | 2027-04-08 | 2027-04-11 | RHD4CZ1C081SW2300 |  | -151d |
| RHD4CZ1C081SW2500 |  | Backfilling and warning tape works for UPVC Pipe Line 200 mm - (RD-C-8 /1)-Z1-C081-SW | 4d | 2027-04-12 | 2027-04-15 | RHD4CZ1C081SW2400 |  | -151d |
|  | 387 | **RHD4-02-002-C081-(SW)-Concrete Encasement** |  |  |  |  |  |  |
|  | 415 | **RHD4-02-002-Z1-C081-Potable Network - PT** |  | 2027-04-17 | 2027-09-13 |  |  |  |
|  | 418 | **RHD4-02-002-C081-(PT)-HDPE Pipes - 200 mm diameter** |  | 2027-04-17 | 2027-05-25 |  |  |  |
| RHD4CZ1C081PT1102 |  | Excavation works for HDPE Pipline 200 mm - (RD-C-8 /1)-Z1-C081-PT | 6d | 2027-04-17 | 2027-04-22 | RHD4ENSDZ1APPPT130, RHD4ENMSPT2000, RHD4CZ1C081SW2500 |  | -151d |
| RHD4CZ1C081PT1202 |  | Bedding works for HDPE Pipline 200 mm - (RD-C-8 /1)-Z1-C081-PT | 5d | 2027-04-24 | 2027-04-28 | RHD4CZ1C081PT1102 |  | -141d |
| RHD4CZ1C081PT1302 |  | Installing for HDPE Pipline 200 mm - (RD-C-8 /1)-Z1-C081-PT | 9d | 2027-04-29 | 2027-05-09 | RHD4PRSHLDOSPT1000, RHD4PRSHLSTAGPT1000, RHD4CZ1C081PT1202 |  | -141d |
| RHD4CZ1C081PT1402 |  | Primary Test for HDPE Pipline 200 mm - (RD-C-8 /1)-Z1-C081-PT | 3d | 2027-05-10 | 2027-05-12 | RHD4CZ1C081PT1302 |  | -141d |
| RHD4CZ1C081PT1502 |  | Backfilling and warning tape works for HDPE Pipline 200 mm - (RD-C-8 /1)-Z1-C081-PT | 7d | 2027-05-13 | 2027-05-25 | RHD4CZ1C081PT1402 |  | -141d |
|  | 417 | **RHD4-02-002-C081-(PT)-HDPE Pipes - 160 mm diameter** |  |  |  |  |  |  |
|  | 6848 | **RHD4-02-002-C081-(PT)-HDPE Pipes - 110 mm diameter** |  | 2027-05-26 | 2027-06-10 |  |  |  |
| RHD4CZ1C081PT1100 |  | Excavation works for HDPE Pipline 110 mm - (RD-C-8 /1)-Z1-C081-PT | 3d | 2027-05-26 | 2027-05-29 | RHD4CZ1C081PT1102, RHD4CZ1C081PT1502 |  | -128d |
| RHD4CZ1C081PT1200 |  | Bedding works for HDPE Pipline 110 mm - (RD-C-8 /1)-Z1-C081-PT | 2d | 2027-05-30 | 2027-05-31 | RHD4CZ1C081PT1100 |  | -128d |
| RHD4CZ1C081PT1300 |  | Installing for HDPE Pipline 110 mm - (RD-C-8 /1)-Z1-C081-PT | 4d | 2027-06-01 | 2027-06-05 | RHD4CZ1C081PT1200 |  | -128d |

| ID | WBS | Task | Duration | Start | Finish | Predecessors | Total float |
| --- | --- | --- | --- | --- | --- | --- | --- |
| RHD4CZ1C081PT1400 |  | Primary Test for HDPE Pipline 110 mm - (RD-C-8 /1)-Z1-C081-PT | 2d | 2027-06-06 | 2027-06-07 | RHD4CZ1C081PT1300 | -128d |
| RHD4CZ1C081PT1500 |  | Backfilling and warning tape works for HDPE Pipline 110 mm - (RD-C-8 /1)-Z1-C081-PT | 3d | 2027-06-08 | 2027-06-10 | RHD4CZ1C081PT1400 | -128d |
|  | 421 | **RHD4-02-002-C081-(PT)-Gate Valves (Direct Buried)** |  | 2027-06-12 | 2027-06-15 |  |  |
| RHD4CZ1C081PT3100 |  | Installation for Direct Buried Gate Valves - (RD-C-8 /1)-Z1-C081-PT | 2d | 2027-06-12 | 2027-06-13 | RHD4PRSHLDOSPT1200, RHD4PRSHLSTAGPT1200, RHD4CZ1C081PT1500 | -128d |
| RHD4CZ1C081PT3200 |  | Stem and Service box for Direct Buried Gate Valves - (RD-C-8 /1)-Z1-C081-PT | 2d | 2027-06-14 | 2027-06-15 | RHD4PRSHLDOSPT1300, RHD4PRSHLSTAGPT1300, RHD4CZ1C081PT3100, RHD4CZ1C081PT1502 | -128d |
|  | 429 | **RHD4-02-002-C081-(PT)-Concrete Encasement** |  |  |  |  |  |
|  | 426 | **RHD4-02-002-C081-(PT)-Air Valve Chambers** |  | 2027-05-30 | 2027-06-07 |  |  |
| RHD4CZ1C081PT2102 |  | Excavation and Bedding for Air Valve Chambers for Potable Water Network - (RD-C-8 /1)-Z1-C081-PT | 2d | 2027-05-30 | 2027-05-31 | RHD4ENSDZ1APPPT130, RHD4CZ1C081PT1100, RHD4CZ1C081PT1100 FF | -127d |
| RHD4CZ1C081PT2202 |  | PC works for Air Valve Chambers for Potable Water Network - (RD-C-8 /1)-Z1-C081-PT | 2d | 2027-06-01 | 2027-06-02 | RHD4CZ1C081PT2102 | -127d |
| RHD4CZ1C081PT2302 |  | Installation for Air Valve Chambers for Potable Water Network - (RD-C-8 /1)-Z1-C081-PT | 2d | 2027-06-03 | 2027-06-05 | RHD4PRSHLDOSPT1100, RHD4PRSHLDOSPT1400, RHD4PRSHLSTAGPT1100, RHD4PRSHLSTAGPT1400, RHD4CZ1C081PT2202 | -127d |
| RHD4CZ1C081PT2402 |  | Backfilling works for Air Valve Chambers for Potable Water Network - (RD-C-8 /1)-Z1-C081-PT | 2d | 2027-06-06 | 2027-06-07 | RHD4CZ1C081PT2302 | -127d |
|  | 427 | **RHD4-02-002-C081-(PT)-Air Valves** |  | 2027-06-03 | 2027-06-09 |  |  |
| RHD4CZ1C081PT3103 |  | Installation for Air Valves for Potable Water Network - (RD-C-8 /1)-Z1-C081-PT | 2d | 2027-06-03 | 2027-06-05 | RHD4PRSHLDOSPT1200, RHD4PRSHLSTAGPT1200, RHD4CZ1C081PT2202 | -125d |
| RHD4CZ1C081PT3203 |  | Stem and Service box for Air Valves for Potable Water Network - (RD-C-8 /1)-Z1-C081-PT | 2d | 2027-06-08 | 2027-06-09 | RHD4PRSHLDOSPT1300, RHD4PRSHLSTAGPT1300, RHD4CZ1C081PT3103, RHD4CZ1C081PT2402 | -127d |
|  | 428 | **RHD4-02-002-C081-(PT)-Fire Hydrant** |  | 2027-06-10 | 2027-09-13 |  |  |
| RHD4CZ1C081PT4100 |  | Excavation and Bedding and Pipe Installation for Fire Hydrant - (RD-C-8 /1)-Z1-C081-PT | 4d | 2027-06-10 | 2027-06-14 | RHD4ENSDZ1APPPT130, RHD4CZ1C081PT2102, RHD4CZ1C081PT3203 | -127d |
| RHD4CZ1C081PT4200 |  | Valve Installation for Fire Hydrant - (RD-C-8 /1)-Z1-C081-PT | 3d | 2027-09-01 | 2027-09-04 | RHD4CZ1C081PT1500, RHD4CZ1C081PT3200, RHD4PRSHLDOSICT1000, RHD4PRSHLSTAGICT1000, RHD4CZ1C081PT4100, RHD4CZ1L101IRR3200, RHD4CZ7L131ST3501 | -194d |
| RHD4CZ1C081PT4300 |  | Stem for Fire Hydrant - (RD-C-8 /1)-Z1-C081-PT | 3d | 2027-09-05 | 2027-09-07 | RHD4CZ6C062ICT3400, RHD4CZ1C081PT4200 | -194d |
| RHD4CZ1C081PT4400 |  | Fire Installation for Fire Hydrant - (RD-C-8 /1)-Z1-C081-PT | 3d | 2027-09-08 | 2027-09-11 | RHD4PRSHLDOSPT1500, RHD4PRSHLSTAGPT1500, RHD4CZ1C081PT4300, RHD4CZ9L02IRR2401 | -194d |
| RHD4CZ1C081PT4500 |  | Protection Barriers for Fire Hydrant - (RD-C-8 /1)-Z1-C081-PT | 2d | 2027-09-12 | 2027-09-13 | RHD4CZ1C081PT4400, RHD4CZ4C012IRR3201, RHD4CZ4A013TC2400 | -194d |
|  | 430 | **RHD4-02-002-Z1-C081-Irrigation Network - IRR** |  | 2027-04-24 | 2027-05-23 |  |  |
|  | 437 | **RHD4-02-002-C081-(IRR)-HDPE Pipes - 450 mm diameter** |  |  |  |  |  |
|  | 6863 | **RHD4-02-002-C081-(IRR)-HDPE Pipes - 160 mm diameter** |  | 2027-04-24 | 2027-05-04 |  |  |
| RHD4CZ1C081IRR1100 |  | Excavation works for HDPE Pipline 160 mm - (RD-C-8 /1)-Z1-C081-IRR | 2d | 2027-04-24 | 2027-04-25 | RHD4ENSDZ1APPIRR140, RHD4ENMSRR2000, RHD4CZ1C081PT1102 | -150d |
| RHD4CZ1C081IRR1200 |  | Bedding works for HDPE Pipline 160 mm - (RD-C-8 /1)-Z1-C081-IRR | 2d | 2027-04-26 | 2027-04-27 | RHD4CZ1C081IRR1100 | -150d |
| RHD4CZ1C081IRR1300 |  | Installing for HDPE Pipline 160 mm - (RD-C-8 /1)-Z1-C081-IRR | 2d | 2027-04-28 | 2027-04-29 | RHD4CZ1C081IRR1200 | -150d |
| RHD4CZ1C081IRR1400 |  | Primary Test for HDPE Pipline 160 mm - (RD-C-8 /1)-Z1-C081-IRR | 2d | 2027-05-01 | 2027-05-02 | RHD4CZ1C081IRR1300 | -150d |
| RHD4CZ1C081IRR1500 |  | Backfilling and warning tape works for HDPE Pipline 160 mm - (RD-C-8 /1)-Z1-C081-IRR | 2d | 2027-05-03 | 2027-05-04 | RHD4CZ1C081IRR1400 | -150d |
|  | 6876 | **RHD4-02-002-C081-(IRR)-Air Valve Chamber** |  | 2027-05-05 | 2027-05-13 |  |  |
| RHD4CZ1C081IRR2102 |  | Excavation and Bedding for Valve Chamber for Irrigation Network - (RD-C-8 /1)-Z1-C081-IRR | 2d | 2027-05-05 | 2027-05-06 | RHD4CZ1C081IRR1100, RHD4CZ1C081IRR1500 | -150d |
| RHD4CZ1C081IRR2202 |  | PC works for Valve Chamber for Irrigation Network - (RD-C-8 /1)-Z1-C081-IRR | 2d | 2027-05-08 | 2027-05-09 | RHD4CZ1C081IRR2102 | -150d |
| RHD4CZ1C081IRR2302 |  | Installation for Valve Chamber for Irrigation Network - (RD-C-8 /1)-Z1-C081-IRR | 2d | 2027-05-10 | 2027-05-11 | RHD4CZ1C081IRR2202 | -150d |
| RHD4CZ1C081IRR2402 |  | Backfilling works for Valve Chamber for Irrigation Network - (RD-C-8 /1)-Z1-C081-IRR | 2d | 2027-05-12 | 2027-05-13 | RHD4CZ1C081IRR2302 | -150d |
|  | 6877 | **RHD4-02-002-C081-(IRR)-Air Valves** |  | 2027-05-19 | 2027-05-23 |  |  |
| RHD4CZ1C081IRR3103 |  | Installation for Air Valves for Irrigation Network - (RD-C-8 /1)-Z1-C081-IRR | 2d | 2027-05-19 | 2027-05-20 | RHD4CZ1C081IRR2302, RHD4CZ1C081IRR2402 | -150d |
| RHD4CZ1C081IRR3203 |  | Stem and Service box for Air Valves for Irrigation Network - (RD-C-8 /1)-Z1-C081-IRR | 2d | 2027-05-22 | 2027-05-23 | RHD4CZ1C081IRR3103, RHD4CZ1C081IRR2402 | -150d |
|  | 436 | **RHD4-02-002-C081-(IRR)-HDPE Pipes - 400 mm diameter** |  |  |  |  |  |
|  | 435 | **RHD4-02-002-C081-(IRR)-HDPE Pipes - 315 mm diameter** |  | 2027-04-24 | 2027-05-20 |  |  |
| RHD4CZ1C081IRR1104 |  | Excavation works for HDPE Pipline 315 mm - (RD-C-8 /1)-Z1-C081-IRR | 5d | 2027-04-24 | 2027-04-28 | RHD4ENSDZ1APPIRR140, RHD4ENMSRR2000, RHD4CZ1C081PT1102 | -151d |
| RHD4CZ1C081IRR1204 |  | Bedding works for HDPE Pipline 315 mm - (RD-C-8 /1)-Z1-C081-IRR | 4d | 2027-04-29 | 2027-05-03 | RHD4CZ1C081IRR1104 | -151d |
| RHD4CZ1C081IRR1304 |  | Installing for HDPE Pipline 315 mm - (RD-C-8 /1)-Z1-C081-IRR | 5d | 2027-05-04 | 2027-05-09 | RHD4PRSHLDOSIRR1000, RHD4PRSHLSTAGIRR1000, RHD4CZ1C081IRR1204 | -151d |
| RHD4CZ1C081IRR1404 |  | Primary Test for HDPE Pipline 315 mm - (RD-C-8 /1)-Z1-C081-IRR | 2d | 2027-05-10 | 2027-05-11 | RHD4CZ1C081IRR1304 | -151d |
| RHD4CZ1C081IRR1504 |  | Backfilling and warning tape works for HDPE Pipline 315 mm - (RD-C-8 /1)-Z1-C081-IRR | 4d | 2027-05-12 | 2027-05-20 | RHD4CZ1C081IRR1404 | -151d |
|  | 433 | **RHD4-02-002-C081-(IRR)-HDPE Pipes - 200 mm diameter** |  |  |  |  |  |
|  | 439 | **RHD4-02-002-C081-(IRR)-Gate Valves (Direct Buried)** |  | 2027-05-10 | 2027-05-13 |  |  |
| RHD4CZ1C081IRR3100 |  | Installation for Direct Buried Gate Valves - (RD-C-8 /1)-Z1-C081-IRR | 2d | 2027-05-10 | 2027-05-11 | RHD4PRSHLDOSIRR1100, RHD4PRSHLSTAGIRR1100, RHD4CZ1C081IRR1304 SS, RHD4CZ1C081IRR1304 FF, RHD4CZ1C081IRR1304, RHD4CZ1C081IRR1204, RHD4CZ1C081IRR1204 FF, RHD4CZ1C081IRR1104, RHD4CZ1C081IRR1104 FF | -150d |
| RHD4CZ1C081IRR3200 |  | Stem and Service box for Direct Buried Gate Valves - (RD-C-8 /1)-Z1-C081-IRR | 2d | 2027-05-12 | 2027-05-13 | RHD4PRSHLDOSIRR1300, RHD4PRSHLSTAGIRR1300, RHD4CZ1C081IRR3100, RHD4CZ1C081IRR1204, RHD4CZ1C081IRR1104 | -150d |
|  | 446 | **RHD4-02-002-C081-(IRR)-Concrete Encasement** |  |  |  |  |  |
|  | 464 | **RHD4-02-002-Z1-C081-Medium Voltage Network - MV** |  | 2027-06-19 | 2027-07-21 |  |  |
|  | 465 | **RHD4-02-002-C081-(MV)-Medium Voltage cable trench** |  | 2027-06-19 | 2027-07-13 |  |  |
| RHD4CZ1C081MV1100 |  | Excavation for Medium Voltage Trench - (RD-C-8 /1)-Z1-C081-MV | 6d | 2027-06-19 | 2027-06-24 | RHD4ENSDZ1APPMV150, RHD4CZ1C081RD3100, RHD4CZ1L101MV3300 | -198d |
| RHD4CZ1C081MV1200 |  | Trench Backfilling for Medium Voltage Network - (RD-C-8 /1)-Z1-C081-MV | 6d | 2027-07-07 | 2027-07-13 | RHD4CZ1C081MV3200 | -198d |
|  | 467 | **RHD4-02-002-C081-(MV)-Medium Voltage cables 3Cx 500 mm²** |  | 2027-06-26 | 2027-07-19 |  |  |
| RHD4CZ1C081MV3100 |  | Installation of Medium Voltage Cables 3Cx 500 mm² - (RD-C-8 /1)-Z1-C081-MV | 8d | 2027-06-26 | 2027-07-04 | RHD4PRSHLDOSMV1100, RHD4ENMSMV2000, RHD4ENMSMV2010, RHD4PRSHLSTAGMV1100, RHD4CZ1C081MV1100, RHD4CZ1C081MV1100 SS | -198d |
| RHD4CZ1C081MV3200 |  | Joints Installation of Medium Voltage Cables 3Cx 500 mm² - (RD-C-8 /1)-Z1-C081-MV | 2d | 2027-07-05 | 2027-07-06 | RHD4PRSHLDOSMV1300, RHD4PRSHLSTAGMV1300, RHD4CZ1C081MV3100 | -198d |
| RHD4CZ1C081MV3300 |  | Testing of Medium Voltage Cables 3Cx 500 mm² - (RD-C-8 /1)-Z1-C081-MV | 3d | 2027-07-14 | 2027-07-17 | RHD4CZ1C081MV3200, RHD4CZ1C081MV1200, RHD4CZ1C081MV3100 | -126d |
| RHD4CZ1C081MV3400 |  | Termination of Medium Voltage Cables 3Cx 500 mm² - (RD-C-8 /1)-Z1-C081-MV | 2d | 2027-07-18 | 2027-07-19 | RHD4CZ1C081MV3300 | -126d |
|  | 468 | **RHD4-02-002-C081-(MV)-Medium Voltage cables 3Cx 50 mm²** |  | 2027-07-20 | 2027-07-21 |  |  |
| RHD4CZ1C081MV3401 |  | Termination of Medium Voltage Cables 3Cx 50 mm² - (RD-C-8 /1)-Z1-C081-MV | 2d | 2027-07-20 | 2027-07-21 | RHD4CZ1C081MV3400 | -126d |
|  | 470 | **RHD4-02-002-C081-(MV)-Unit Substations** |  |  |  |  |  |
|  | 5388 | **RHD4-02-002-C081-(MV)-Normally open Point (Outdoor Type)** |  | 2027-07-14 | 2027-07-18 |  |  |
| RHD4CZ1C081MV4100 |  | Installation for Normally open Point - (RD-C-8 /1)-Z1-C081-MV | 2d | 2027-07-14 | 2027-07-15 | RHD4CZ1C081MV1200 | -198d |
| RHD4CZ1C081MV4200 |  | Termination for Normally open Point - (RD-C-8 /1)-Z1-C081-MV | 2d | 2027-07-17 | 2027-07-18 | RHD4CZ1C081MV4100 | -198d |
|  | 471 | **RHD4-02-002-Z1-C081-Low Voltage Network - LV** |  | 2027-05-22 | 2027-06-24 |  |  |
|  | 472 | **RHD4-02-002-C081-(LV)-Low Voltage duct banks** |  | 2027-05-22 | 2027-06-03 |  |  |
| RHD4CZ1C081LV2100 |  | Excavation of Duct Banks for Low Voltage Network - (RD-C-8 /1)-Z1-C081-LV | 3d | 2027-05-22 | 2027-05-24 | RHD4ENSDZ1APPLV160, RHD4CZ1C081IRR1504 | -151d |
| RHD4CZ1C081LV2200 |  | Installation of Duct Banks for Low Voltage Network - (RD-C-8 /1)-Z1-C081-LV | 4d | 2027-05-25 | 2027-05-29 | RHD4PRSHLDOSLV1000, RHD4PRSHLSTAGLV1000, RHD4CZ1C081LV2100 | -151d |
| RHD4CZ1C081LV2300 |  | Pouring of Duct Banks for Low Voltage Network - (RD-C-8 /1)-Z1-C081-LV | 3d | 2027-05-30 | 2027-06-01 | RHD4CZ1C081LV2200 | -151d |
| RHD4CZ1C081LV2400 |  | Backfilling of Duct Banks for Low Voltage Network - (RD-C-8 /1)-Z1-C081-LV | 2d | 2027-06-02 | 2027-06-03 | RHD4CZ1C081LV2300 | -149d |
|  | 473 | **RHD4-02-002-C081-(LV)-Low Voltage Drawpit** |  | 2027-06-02 | 2027-06-06 |  |  |

| ID | WBS | Task | Duration | Start | Finish | Predecessors | Total float |
| --- | --- | --- | --- | --- | --- | --- | --- |
| RHD4CZ1C081LV5100 |  | Excavation of Drawpit size 900x900x1000mm for Low Voltage Network - (RD-C-8 /1)-Z1-C081-LV | 2d | 2027-06-02 | 2027-06-03 | RHD4ENSDZ1APPLV160, RHD4CZ1C081LV2300 | -151d |
| RHD4CZ1C081LV5200 |  | Installation of Drawpit size 900x900x1000mm for Low Voltage Network - (RD-C-8 /1)-Z1-C081-LV | 2d | 2027-06-05 | 2027-06-06 | RHD4PRSHLDOSLV1400, RHD4PRSHLSTAGLV1400, RHD4CZ1C081LV5100 | -151d |
|  | 474 | **RHD4-02-002-C081-(LV)-Low Voltage cables** |  | 2027-06-07 | 2027-06-24 |  |  |
| RHD4CZ1C081LV3100 |  | Excavation for Low Voltage Cables for Low Voltage Network - (RD-C-8 /1)-Z1-C081-LV | 5d | 2027-06-07 | 2027-06-12 | RHD4ENSDZ1APPLV160, RHD4CZ1C081LV2400, RHD4CZ1C081PT1502, RHD4CZ1C081IRR1504, RHD4CZ1C081SW2500, RHD4CZ1C081SW3300, RHD4CZ1C081SW3300 SS, RHD4CZ1C081SW3200 SS, RHD4CZ1C081SW3100 SS, RHD4CZ1C081SW3100, RHD4CZ1C081PT1102, RHD4CZ1C081IRR1404, RHD4CZ1C081IRR1304, RHD4CZ1C081IRR1204, RHD4CZ1C081IRR1104, RHD4CZ1C081LV5200 | -151d |
| RHD4CZ1C081LV3200 |  | Cable Laying of Low Voltage Cables for Low Voltage Network - (RD-C-8 /1)-Z1-C081-LV | 4d | 2027-06-13 | 2027-06-16 | RHD4PRSHLDOSLV1100, RHD4ENMSLV2000, RHD4ENMSLV2010, RHD4PRSHLSTAGLV1100, RHD4CZ1C081LV3100 | -151d |
| RHD4CZ1C081LV3300 |  | Warning tape and Backfill for Low Voltage Cables for Low Voltage Network - (RD-C-8 /1)-Z1-C081-LV | 4d | 2027-06-17 | 2027-06-21 | RHD4CZ1C081LV3200 | -151d |
| RHD4CZ1C081LV3400 |  | Testing of Low Voltage Cables for Low Voltage Network - (RD-C-8 /1)-Z1-C081-LV | 3d | 2027-06-22 | 2027-06-24 | RHD4CZ1C081LV3300 | -151d |
|  | 475 | **RHD4-02-002-C081-(LV)-Low Voltage Distribution Pillars** |  |  |  |  |  |
|  | 476 | **RHD4-02-002-C081-(LV)-Low Voltage Distribution Pillars Earthing** |  |  |  |  |  |
|  | 477 | **RHD4-02-002-Z1-C081-Street Lighting Network - SL** |  | 2027-06-07 | 2027-08-22 |  |  |
|  | 478 | **RHD4-02-002-C081-(SL)-Street Lighting duct banks** |  | 2027-06-07 | 2027-06-26 |  |  |
| RHD4CZ1C081SL2100 |  | Excavation of Duct Banks for Street Lighting Network - (RD-C-8 /1)-Z1-C081-SL | 4d | 2027-06-07 | 2027-06-10 | RHD4ENSDZ1APPSL170, RHD4CZ1C081LV5200, RHD4CZ1C081LV2100, RHD4CZ1C081IRR1504 | -149d |
| RHD4CZ1C081SL2200 |  | Installation of Duct Banks for Street Lighting Network - (RD-C-8 /1)-Z1-C081-SL | 6d | 2027-06-12 | 2027-06-17 | RHD4PRSHLDOSSL1000, RHD4PRSHLSTAGSL1000, RHD4CZ1C081SL2100, RHD4CZ1C081LV2200 | -149d |
| RHD4CZ1C081SL2300 |  | Pouring of Duct Banks for Street Lighting Network - (RD-C-8 /1)-Z1-C081-SL | 4d | 2027-06-19 | 2027-06-22 | RHD4CZ1C081SL2200, RHD4CZ1C081LV2300 | -149d |
| RHD4CZ1C081SL2400 |  | Backfilling of Duct Banks for Street Lighting Network - (RD-C-8 /1)-Z1-C081-SL | 3d | 2027-06-23 | 2027-06-26 | RHD4CZ1C081SL2300 | -149d |
|  | 479 | **RHD4-02-002-C081-(SL)-Street Lighting Drawpit** |  | 2027-07-01 | 2027-07-05 |  |  |
| RHD4CZ1C081SL5100 |  | Excavation of Drawpit size 600x600x900mm for Street Lighting Network - (RD-C-8 /1)-Z1-C081-SL | 2d | 2027-07-01 | 2027-07-03 | RHD4ENSDZ1APPSL170, RHD4CZ1C081SL2300, RHD4CZ1C081SL1100 | -149d |
| RHD4CZ1C081SL5200 |  | Installation of Drawpit size 600x600x900mm for Street Lighting Network - (RD-C-8 /1)-Z1-C081-SL | 2d | 2027-07-04 | 2027-07-05 | RHD4PRSHLDOSSL1400, RHD4PRSHLSTAGSL1400, RHD4CZ1C081SL5100 | -149d |
|  | 480 | **RHD4-02-002-C081-(SL)-Street Lighting cables** |  | 2027-07-11 | 2027-08-09 |  |  |
| RHD4CZ1C081SL3100 |  | Excavation for Street Lighting Cables for Street Lighting Network - (RD-C-8 /1)-Z1-C081-SL | 8d | 2027-07-11 | 2027-07-19 | RHD4ENSDZ1APPSL170, RHD4CZ1C081SL1300 | -149d |
| RHD4CZ1C081SL3200 |  | Cable Laying of Street Lighting Cables for Street Lighting Network - (RD-C-8 /1)-Z1-C081-SL | 7d | 2027-07-20 | 2027-07-27 | RHD4PRSHLDOSSL1100, RHD4ENMSSL2000, RHD4ENMSSL2010, RHD4PRSHLSTAGSL1100, RHD4CZ1C081SL3100 | -149d |
| RHD4CZ1C081SL3300 |  | Warning tape and Backfill for Street Lighting Cables for Street Lighting Network - (RD-C-8 /1)-Z1-C081-SL | 7d | 2027-07-28 | 2027-08-04 | RHD4CZ1C081SL3200 | -149d |
| RHD4CZ1C081SL3400 |  | Testing of Street Lighting Cables for Street Lighting Network - (RD-C-8 /1)-Z1-C081-SL | 4d | 2027-08-05 | 2027-08-09 | RHD4CZ7L131SW1501, RHD4CZ1C081SL3300, RHD4CZ1C081LV3400 | -149d |
|  | 481 | **RHD4-02-002-C081-(SL)-Street Lighting Poles** |  | 2027-06-27 | 2027-08-22 |  |  |
| RHD4CZ1C081SL1100 |  | Excavation for RC Base for Lighting Poles for Street Lighting Network - (RD-C-8 /1)-Z1-C081-SL | 4d | 2027-06-27 | 2027-06-30 | RHD4ENSDZ1APPSL170, RHD4CZ1C081SL2400, RHD4CZ1C081PT1502, RHD4CZ1C081IRR1504, RHD4CZ1C081SW2500, RHD4CZ1C081SW3300, RHD4CZ1C081SW3300 SS, RHD4CZ1C081SW3200 SS, RHD4CZ1C081SW3100 SS, RHD4CZ1C081SW3100, RHD4CZ1C081PT1102, RHD4CZ1C081IRR1404, RHD4CZ1C081IRR1304, RHD4CZ1C081IRR1204, RHD4CZ1C081IRR1104 | -149d |
| RHD4CZ1C081SL1200 |  | Installation for RC Base for Lighting Poles for Street Lighting Network - (RD-C-8 /1)-Z1-C081-SL | 4d | 2027-07-01 | 2027-07-05 | RHD4CZ1C081SL1100 | -149d |
| RHD4CZ1C081SL1300 |  | Backfill for RC Base for Lighting Poles for Street Lighting Network - (RD-C-8 /1)-Z1-C081-SL | 4d | 2027-07-06 | 2027-07-10 | RHD4CZ1C081SL1200, RHD4CZ1C081SL5200 | -149d |
| RHD4CZ1C081SL1400 |  | Installation for Lighting Poles for Street Lighting Network - (RD-C-8 /1)-Z1-C081-SL | 5d | 2027-08-10 | 2027-08-15 | RHD4PRSHLDOSSL1200, RHD4ENMSSL2000, RHD4ENMSSL2010, RHD4PRSHLSTAGSL1200, RHD4CZ1C081SL1300, RHD4CZ1C081SL3400 | -149d |
| RHD4CZ1C081SL1500 |  | Luminaire Installation for Lighting Poles for Street Lighting Network - (RD-C-8 /1)-Z1-C081-SL | 6d | 2027-08-16 | 2027-08-22 | RHD4PRSHLDOSSL1300, RHD4PRSHLSTAGSL1300, RHD4CZ1C081SL1400 | -136d |
|  | 482 | **RHD4-02-002-C081-(SL)-Street Lighting Feeder Pillars** |  | 2027-08-05 | 2027-08-17 |  |  |
| RHD4CZ1C081SL4100 |  | Leveling for Distribution Pillars for Street Lighting Network - (RD-C-8 /1)-Z1-C081-SL | 2d | 2027-08-05 | 2027-08-07 | RHD4CZ1C081SL3300 | -144d |
| RHD4CZ1C081SL4200 |  | Lean Concrete for Distribution Pillars for Street Lighting Network - (RD-C-8 /1)-Z1-C081-SL | 2d | 2027-08-08 | 2027-08-09 | RHD4CZ1C081SL4100 | -144d |
| RHD4CZ1C081SL4300 |  | Installation of Distribution Pillars for Street Lighting Network - (RD-C-8 /1)-Z1-C081-SL | 2d | 2027-08-16 | 2027-08-17 | RHD4CZ1C081SL4200, RHD4CZ1C081SL1400 | -149d |
|  | 483 | **RHD4-02-002-C081-(SL)-Street Lighting Earthing System** |  | 2027-08-18 | 2027-08-19 |  |  |
| RHD4CZ1C081SL6100 |  | Installation of Earthing for Lighting Poles and Fedder Pillers for Street Lighting Network - (RD-C-8 /1)-Z1-C081-SL | 2d | 2027-08-18 | 2027-08-19 | RHD4ENMSER2000, RHD4ENMSER2010, RHD4CZ1C081SL4300, RHD4CZ1C081MV3401 | -149d |
|  | 489 | **RHD4-02-002-Z1-C081-Telecommunications Network - TC** |  | 2027-01-31 | 2027-09-29 |  |  |
|  | 490 | **RHD4-02-002-C081-(TC)-Telecommunications Ducts** |  | 2027-08-21 | 2027-09-29 |  |  |
| RHD4CZ1C081TC2100 |  | Excavation of HDPE Ducts for Telecom Network - (RD-C-8 /1)-Z1-C081-TC | 10d | 2027-08-21 | 2027-08-31 | RHD4ENSDZ1APPTC190, RHD4CZ1C081SL3300, RHD4CZ1C081SL2400, RHD4CZ1C081SL2300, RHD4CZ1C081SL2200, RHD4CZ1C081SL2100, RHD4CZ1C081LV3300, RHD4CZ1C081SL6100 | -149d |
| RHD4CZ1C081TC2200 |  | Installation of HDPE Ducts for Telecom Network - (RD-C-8 /1)-Z1-C081-TC | 14d | 2027-09-01 | 2027-09-16 | RHD4PRSHLDOSTC1000, RHD4PRSHLSTAGTC1000, RHD4CZ1C081TC2100 | -142d |
| RHD4CZ1C081TC2400 |  | Backfilling of HDPE Ducts for Telecom Network - (RD-C-8 /1)-Z1-C081-TC | 10d | 2027-09-18 | 2027-09-29 | RHD4CZ1C081TC2200, RHD4CZ1C081TC5200 | -133d |
|  | 491 | **RHD4-02-002-C081-(TC)-Telecommunications Manholes** |  | 2027-09-01 | 2027-09-09 |  |  |
| RHD4CZ1C081TC5100 |  | Excavation for Manholes for Telecom Network - (RD-C-8 /1)-Z1-C081-TC | 4d | 2027-09-01 | 2027-09-05 | RHD4ENSDZ1APPTC190, RHD4CZ1C081TC2100, RHD4CZ1C081TC2100 FF | -146d |
| RHD4CZ1C081TC5200 |  | Installation of Manholes for Telecom Network - (RD-C-8 /1)-Z1-C081-TC | 4d | 2027-09-06 | 2027-09-09 | RHD4PRSHLDOSTC1200, RHD4PRSHLSTAGTC1200, RHD4CZ1C081TC5100, RHD4CZ1C081TC2200 SS | -146d |
|  | 5411 | **RHD4-02-002-C081-(TC)-Telecomminications Road Crossings** |  | 2027-01-31 | 2027-02-09 |  |  |
| RHD4CZ1C081TC3100 |  | Excavation for Road Crossings for Telecom Network - (RD-C-8 /1)-Z1-C081-TC | 2d | 2027-01-31 | 2027-02-01 | RHD4CZ1C081RW2000, RHD4CZ1C081ST1504 | -145.02d |
| RHD4CZ1C081TC3200 |  | Installation of Road Crossings for Telecom Network - (RD-C-8 /1)-Z1-C081-TC | 2.01d | 2027-02-02 | 2027-02-04 | RHD4CZ1C081TC3100 | -145.02d |
| RHD4CZ1C081TC3300 |  | Pouring of Road Crossings for Telecom Network - (RD-C-8 /1)-Z1-C081-TC | 2.01d | 2027-02-04 | 2027-02-07 | RHD4CZ1C081TC3200 | -145.02d |
| RHD4CZ1C081TC3400 |  | Backfilling of Road Crossings for Telecom Network - (RD-C-8 /1)-Z1-C081-TC | 2d | 2027-02-07 | 2027-02-09 | RHD4CZ1C081TC3300 | -145.02d |
|  | 493 | **RHD4-02-002-Z1-C081-Information and Communication Technologies - ICT** |  | 2027-08-05 | 2027-09-21 |  |  |
|  | 494 | **RHD4-02-002-C081-(ICT)-Information and Communication Technologies Ducts** |  | 2027-08-05 | 2027-09-21 |  |  |
| RHD4CZ1C081ICT2100 |  | Excavation of HDPE Ducts for ICT Network - (RD-C-8 /1)-Z1-C081-ICT | 10d | 2027-08-05 | 2027-08-16 | RHD4ENSDZ1APPICT200, RHD4CZ1C081SL3300, RHD4CZ1C081SL2400, RHD4CZ1C081SL2300, RHD4CZ1C081SL2200, RHD4CZ1C081SL2100, RHD4CZ1C081LV3300 | -143d |
| RHD4CZ1C081ICT2200 |  | Installation of HDPE Ducts for ICT Network - (RD-C-8 /1)-Z1-C081-ICT | 15d | 2027-08-17 | 2027-09-02 | RHD4PRSHLDOSICT1000, RHD4PRSHLSTAGICT1000, RHD4CZ1C081ICT2100 | -143d |
| RHD4CZ1C081ICT2400 |  | Backfilling of HDPE Ducts for ICT Network - (RD-C-8 /1)-Z1-C081-ICT | 10d | 2027-09-11 | 2027-09-21 | RHD4CZ1C081ICT2200, RHD4CZ1C081ICT5200 | -149d |
|  | 495 | **RHD4-02-002-C081-(ICT)-Information and Communication Technologies Manholes** |  | 2027-09-01 | 2027-09-09 |  |  |
| RHD4CZ1C081ICT5100 |  | Excavation for Manholes for ICT Network - (RD-C-8 /1)-Z1-C081-ICT | 4d | 2027-09-01 | 2027-09-05 | RHD4ENSDZ1APPICT200, RHD4CZ1C081ICT2100, RHD4CZ1C081TC2100 | -149d |
| RHD4CZ1C081ICT5200 |  | Installation of Manholes for ICT Network - (RD-C-8 /1)-Z1-C081-ICT | 4d | 2027-09-06 | 2027-09-09 | RHD4PRSHLDOSICT1200, RHD4PRSHLSTAGICT1200, RHD4CZ1C081ICT5100 | -149d |
|  | 484 | **RHD4-02-002-Z1-C081-Landscape Network - LS** |  |  |  |  |  |
|  | 485 | **RHD4-02-002-C081-(LS)-Landscape Lighting cables** |  |  |  |  |  |
|  | 486 | **RHD4-02-002-C081-(LS)-Landscape Feeder Pillars** |  |  |  |  |  |
|  | 487 | **RHD4-02-002-C081-(LS)-Landscape Bollard Poles** |  |  |  |  |  |
|  | 488 | **RHD4-02-002-C081-(LS)-Landscape Feeder Pillars Earthing** |  |  |  |  |  |
|  | 497 | **RHD4-02-002-Z1-C081-Security Network - CCTV** |  | 2027-09-30 | 2027-11-14 |  |  |
|  | 498 | **RHD4-02-002-C081-(CCTV)-Civil Works** |  | 2027-09-30 | 2027-10-11 |  |  |
| RHD4CZ1C081CCTV2100 |  | Civil Works for Security Network - (RD-C-8 /1)-Z1-C081-CCTV | 10d | 2027-09-30 | 2027-10-11 | RHD4CZ1C081ICT2400, RHD4CZ1C081TC2400, RHD4CZ1C081MV4200, RHD4CZ1C081MV3401 | -133d |
|  | 499 | **RHD4-02-002-C081-(CCTV)-CCTV Poles** |  | 2027-10-12 | 2027-10-23 |  |  |
| RHD4CZ1C081CCTV1100 |  | Excavation for RC Base for CCTV Poles for Security Network - (RD-C-8 /1)-Z1-C081-CCTV | 2d | 2027-10-12 | 2027-10-13 | RHD4ENSDZ1APPCCTV210, RHD4CZ1C081CCTV2100 | -133d |
| RHD4CZ1C081CCTV1200 |  | Installation for RC Base for CCTV Poles for Security Network - (RD-C-8 /1)-Z1-C081-CCTV | 2d | 2027-10-14 | 2027-10-16 | RHD4CZ1C081CCTV1100 | -133d |
| RHD4CZ1C081CCTV1300 |  | Backfill for RC Base for CCTV Poles for Security Network - (RD-C-8 /1)-Z1-C081-CCTV | 2d | 2027-10-17 | 2027-10-18 | RHD4CZ1C081CCTV1200 | -133d |
| RHD4CZ1C081CCTV1400 |  | Installation for CCTV Poles for Security Network - (RD-C-8 /1)-Z1-C081-CCTV | 2d | 2027-10-19 | 2027-10-20 | RHD4PRSHLDOSCCTV1000, RHD4PRSHLSTACCTV1000, RHD4CZ1C081CCTV1300 | -133d |
| RHD4CZ1C081CCTV1500 |  | Protection post Installation for CCTV Poles for Security Network - (RD-C-8 /1)-Z1-C081-CCTV | 2d | 2027-10-21 | 2027-10-23 | RHD4CZ1C081CCTV1400 | -131d |

| ID | WBS | Task | Duration | Start | Finish | Predecessors | Complete | Total float |
| --- | --- | --- | --- | --- | --- | --- | --- | --- |
|  | 501 | **RHD4-02-002-C081-(CCTV)-Power and Infrastructure** |  | 2027-10-21 | 2027-10-25 |  |  |  |
| RHD4CZ1C081CCTV4100 |  | Installation of Power outlet, UPS and midspan for PTZ Camerafor Cameras for Security Network - (RD-C-8 /1)-Z1-C081-CCTV | 2d | 2027-10-21 | 2027-10-23 | RHD4PRSHLDOSCCTV1300, RHD4PRSHLSTACCTV1300, RHD4CZ1C081CCTV1400 |  | -133d |
| RHD4CZ1C081CCTV4200 |  | Short Range Wireless PoP wireless Bridgefor CCTV Poles for Security Network - (RD-C-8 /1)-Z1-C081-CCTV | 2d | 2027-10-24 | 2027-10-25 | RHD4CZ1C081CCTV4100 |  | -133d |
|  | 500 | **RHD4-02-002-C081-(CCTV)-Camera** |  | 2027-10-26 | 2027-10-27 |  |  |  |
| RHD4CZ1C081CCTV3100 |  | Installation for Cameras for Security Network - (RD-C-8 /1)-Z1-C081-CCTV | 2d | 2027-10-26 | 2027-10-27 | RHD4PRSHLDOSCCTV1100, RHD4PRSHLSTACCTV1100, RHD4CZ1C081CCTV1400, RHD4CZ1C081CCTV4100, RHD4CZ1C081CCTV4200 |  | -102d |
|  | 503 | **RHD4-02-002-C081-(CCTV)-CCTV Panels and Components** |  | 2027-10-28 | 2027-11-14 |  |  |  |
| RHD4CZ1C081CCTV6100 |  | Installation for CCTV Panels for Security Network - (RD-C-8 /1)-Z1-C081-CCTV | 15d | 2027-10-28 | 2027-11-14 | RHD4PRSHLDOSCCTV1200, RHD4PRSHLSTACCTV1200, RHD4PRLOLSTACCTV1001, RHD4CZ1C081CCTV4200, RHD4CZ1C081CCTV3100 |  | -102d |
|  | 1460 | **RHD4-02-002-Z3** |  | 2026-08-04 | 2028-10-26 |  |  |  |
|  | 1650 | **RHD4-02-002-Z3-C011** |  | 2026-08-23 | 2028-09-19 |  |  |  |
|  | 1681 | **RHD4-02-002-Z3-C011-Crossings Sewage Network - SWCr** |  |  |  |  |  |  |
|  | 1689 | **RHD4-02-002-C011-(SWCr)-HDPE Pipes - 400 mm diameter** |  |  |  |  |  |  |
|  | 1699 | **RHD4-02-002-C011-(SWCr)-Butterfly Valve Chambers** |  |  |  |  |  |  |
|  | 1700 | **RHD4-02-002-C011-(SWCr)-Butterfly Valves** |  |  |  |  |  |  |
|  | 1725 | **RHD4-02-002-Z3-C011-Crossings Potable Network - PTCr** |  |  |  |  |  |  |
|  | 1730 | **RHD4-02-002-C011-(PTCr)-HDPE Pipes - 450 mm diameter** |  |  |  |  |  |  |
|  | 1729 | **RHD4-02-002-C011-(PTCr)-HDPE Pipes - 400 mm diameter** |  |  |  |  |  |  |
|  | 1738 | **RHD4-02-002-C011-(PTCr)-Fire Hydrant** |  |  |  |  |  |  |
|  | 1772 | **RHD4-02-002-Z3-C011-Crossings Irrigation Network - IRRC** |  |  |  |  |  |  |
|  | 1777 | **RHD4-02-002-C011-(IRRC)-HDPE Pipes - 315 mm diameter** |  |  |  |  |  |  |
|  | 1773 | **RHD4-02-002-C011-(IRRC)-HDPE Pipes - 160 mm diameter** |  |  |  |  |  |  |
|  | 1781 | **RHD4-02-002-C011-(IRRC)-Gate Valves (Direct Buried)** |  |  |  |  |  |  |
|  | 1782 | **RHD4-02-002-C011-(IRRC)-Butterfly Valve Chamber** |  |  |  |  |  |  |
|  | 1783 | **RHD4-02-002-C011-(IRRC)-Butterfly Valves** |  |  |  |  |  |  |
|  | 1784 | **RHD4-02-002-C011-(IRRC)-Wash out Chamber** |  |  |  |  |  |  |
|  | 1785 | **RHD4-02-002-C011-(IRRC)-Wash out Valves** |  |  |  |  |  |  |
|  | 1829 | **RHD4-02-002-Z3-C011-Road Works - RD** |  | 2026-08-25 | 2028-09-19 |  |  |  |
|  | 1830 | **RHD4-02-002-C011-(RD)-Subgrade** |  | 2026-08-25 | 2027-01-19 |  |  |  |
| RHD4CZ3C011RD1100 |  | Supply, lay and compaction subgrade compacted thickness 300 mm for Roads - (RD-C-1 /1)-Z3-C011-RD | 8d | 2026-08-25 A | 2027-01-19 | RHD4ENSDZ3APPEW100, RHD4ENSDZ3APPRD220, RHD4CZ2L102RD1100 SS | 33% | -120d |
|  | 1831 | **RHD4-02-002-C011-(RD)-Aggregate Base Course** |  | 2026-09-01 | 2027-01-23 |  |  |  |
| RHD4CZ3C011RD2100 |  | Supply, lay and compaction Aggregate base course compacted thickness 300 mmfor Roads - (RD-C-1 /1)-Z3-C011-RD | 11d | 2026-09-01 A | 2027-01-23 | RHD4PRSHLDOSRD1000, RHD4PRSHLSTAGRD1000, RHD4CZ3C011RD1100 | 75% | -111d |
|  | 1832 | **RHD4-02-002-C011-(RD)-Bituminous base course Two Layers, including (MC1)&(RC2)** |  | 2026-09-17 | 2028-07-15 |  |  |  |
| RHD4CZ3C011RD3100 |  | Supply, lay and Asphaltic base course including Prime Coat (MC1) for 1st Layer - (RD-C-1 /1)-Z3-C011-RD | 3d | 2026-09-17 A | 2027-02-06 | RHD4PRSHLDOSRD1100, RHD4ENMSASPH2000, RHD4ENMSASPH2010, RHD4PRSHLSTAGRD1100, RHD4CZ3C011RD2100, RHD4CZ3C011MV2400 | 90% | -120d |
| RHD4CZ3C011RD3200 |  | Supply, lay and Asphaltic base course including Tack Coat (RC2) for 2nd Layer - (RD-C-1 /1)-Z3-C011-RD | 4d | 2028-07-10 | 2028-07-15 | RHD4PRSHLDOSRD1100, RHD4PRSHLSTAGRD1100, RHD4CZ3C011RD3100, RHD4CZ3C011CCTV6100 |  | -177.02d |
|  | 1834 | **RHD4-02-002-C011-(RD)-Precast Concrete Curb** |  | 2028-07-15 | 2028-07-19 |  |  |  |
| RHD4CZ3C011RD5100 |  | Supply and installation Precast Concrete Kerb for Roads - (RD-C-1 /1)-Z3-C011-RD | 4d | 2028-07-15 | 2028-07-19 | RHD4PRSHLDOSRD1200, RHD4ENMSRD2000, RHD4ENMSRD2010, RHD4PRSHLSTAGRD1200, RHD4CZ3C011RD3200 |  | -177.02d |
|  | 1837 | **RHD4-02-002-C011-(RD)-Traffic Signage** |  | 2028-09-10 | 2028-09-19 |  |  |  |
| RHD4CZ3C011RD8100 |  | Installation of Traffic Signage for Road Network - (RD-C-1 /1)-Z3-C011-RD | 9d | 2028-09-10 | 2028-09-19 | RHD4PRSHLDOSRD1600, RHD4PRSHLSTAGRD1600, RHD4CZ3C011RD5100, RHD4CZ3C011TC2400, RHD4CZ3C011ICT2400, RHD4CZ3L122RD8100 |  | -179d |
|  | 1835 | **RHD4-02-002-C011-(RD)-Precast Interlocking Block Pavers** |  |  |  |  |  |  |
|  | 1833 | **RHD4-02-002-C011-(RD)-Bituminous concrete wearing course including tack coat (RC2)** |  | 2028-07-19 | 2028-07-23 |  |  |  |
| RHD4CZ3C011RD4100 |  | Supply, lay and compaction Asphaltic wearing course including tack Coat (RC2)for Road Network - (RD-C-1 /1)-Z3-C011-RD | 3d | 2028-07-19 | 2028-07-23 | RHD4CZ3C011RD5100 |  | -177.02d |
|  | 1838 | **RHD4-02-002-C011-(RD)-Speed Table and Wheel Stopper** |  | 2028-07-26 | 2028-07-29 |  |  |  |
| RHD4CZ3C011RD9100 |  | Installation for Speed Bump for Road Network - (RD-C-1 /1)-Z3-C011-RD | 3d | 2028-07-26 | 2028-07-29 | RHD4CZ3C011RD4100, RHD4GNICTZ9FT1900 |  | -180d |
|  | 1836 | **RHD4-02-002-C011-(RD)-Pavement Marking** |  | 2028-07-30 | 2028-08-02 |  |  |  |
| RHD4CZ3C011RD7100 |  | Pavement Markings for Road Network - (RD-C-1 /1)-Z3-C011-RD | 4d | 2028-07-30 | 2028-08-02 | RHD4PRSHLDOSRD1500, RHD4PRSHLSTAGRD1500, RHD4CZ3C011RD9100 |  | -180d |
|  | 4299 | **RHD4-02-002-Z3-C011-Concrete Box Culvert - ST** |  | 2026-08-29 | 2027-08-25 |  |  |  |
|  | 4300 | **RHD4-02-002-C011-(ST)-Concrete Box Culvert** |  | 2026-08-29 | 2027-08-25 |  |  |  |
| RHD4CZ3C011ST4100 |  | Excavation works for Box Culvert - (RD-C-1/1)-Z3-C011-ST | 7d | 2026-08-29 A | 2026-11-03 A | RHD4ENSWL1APPSTC1000, RHD4CZ3C011RW1000, RHD4CZ3L122ST4100 SS | 100% |  |
| RHD4CZ3C011ST4200 |  | PC works for Box Culvert - (RD-C-1/1)-Z3-C011-ST | 3d | 2026-09-10 A | 2027-07-13 | RHD4CZ3C011ST4100, RHD4CZ3L122ST4200 | 70% | -173d |
| RHD4CZ3C011ST4400 |  | Raft works for Box Culvert - (RD-C-1/1)-Z3-C011-ST | 7d | 2026-09-13 A | 2027-07-24 | RHD4CZ3C011ST4200 | 70% | -173d |
| RHD4CZ3C011ST4500 |  | Wall and slab works for Box Culvert - (RD-C-1/1)-Z3-C011-ST | 7d | 2026-09-16 A | 2027-08-03 | RHD4CZ3C011ST4400 | 70% | -173d |
| RHD4CZ3C011ST4700 |  | Backfilling works for Box Culvert - (RD-C-1/1)-Z3-C011-ST | 11d | 2027-08-04 | 2027-08-16 | RHD4CZ3C011ST4500 |  | -173d |
| RHD4CZ3C011ST4600 |  | Insulation and Testing for Box Culvert - (RD-C-1/1)-Z3-C011-ST | 8d | 2027-08-17 | 2027-08-25 | RHD4CZ3C011ST4700 |  | -173d |
|  | 4301 | **RHD4-02-002-C011-(ST)-Concrete Chambers** |  |  |  |  |  |  |
|  | 1703 | **RHD4-02-002-Z3-C011-Sewage Network - SW** |  |  |  |  |  |  |
|  | 1711 | **RHD4-02-002-C011-(SW)-HDPE Pipes - 400 mm diameter** |  |  |  |  |  |  |
|  | 1712 | **RHD4-02-002-C011-(SW)-Concrete Encasement** |  |  |  |  |  |  |
|  | 1740 | **RHD4-02-002-Z3-C011-Potable Network - PT** |  | 2026-08-29 | 2027-08-11 |  |  |  |
|  | 1745 | **RHD4-02-002-C011-(PT)-HDPE Pipes - 450 mm diameter** |  | 2027-07-01 | 2027-07-25 |  |  |  |
| RHD4CZ3C011PT1104 |  | Excavation works for HDPE Pipline 450 mm - (RD-C-1 /1)-Z3-C011-PT | 4d | 2027-07-01 | 2027-07-05 | RHD4ENSDZ3APPPT130, RHD4ENMSPT2000, RHD4CZ3C011ST4100, RHD4CZ2L102PT1101 |  | -169d |
| RHD4CZ3C011PT1204 |  | Bedding works for HDPE Pipline 450 mm - (RD-C-1 /1)-Z3-C011-PT | 3d | 2027-07-06 | 2027-07-08 | RHD4CZ3C011PT1104 |  | -169d |
| RHD4CZ3C011PT1304 |  | Installing for HDPE Pipline 450 mm - (RD-C-1 /1)-Z3-C011-PT | 5d | 2027-07-10 | 2027-07-14 | RHD4PRSHLDOSPT1000, RHD4PRSHLSTAGPT1000, RHD4CZ3C011PT1204 |  | -169d |
| RHD4CZ3C011PT1404 |  | Primary Test for HDPE Pipline 450 mm - (RD-C-1 /1)-Z3-C011-PT | 2d | 2027-07-19 | 2027-07-20 | RHD4CZ3C011PT1304, RHD4CZ3C011PT5100 |  | -139d |
| RHD4CZ3C011PT1504 |  | Backfilling and warning tape works for HDPE Pipline 450 mm - (RD-C-1 /1)-Z3-C011-PT | 4d | 2027-07-21 | 2027-07-25 | RHD4CZ3C011PT1404 |  | -139d |
|  | 1744 | **RHD4-02-002-C011-(PT)-HDPE Pipes - 400 mm diameter** |  | 2026-08-29 | 2027-07-24 |  |  |  |
| RHD4CZ3C011PT1103 |  | Excavation works for HDPE Pipline 400 mm - (RD-C-1 /1)-Z3-C011-PT | 3d | 2026-08-29 A | 2027-07-08 | RHD4ENSDZ3APPPT130, RHD4ENMSPT2000, RHD4CZ3C011PT1104 | 15% | -167d |
| RHD4CZ3C011PT1203 |  | Bedding works for HDPE Pipline 400 mm - (RD-C-1 /1)-Z3-C011-PT | 3d | 2026-08-30 A | 2027-07-12 | RHD4CZ3C011PT1103, RHD4CZ3C011PT1204 | 2% | -167d |
| RHD4CZ3C011PT1303 |  | Installing for HDPE Pipline 400 mm - (RD-C-1 /1)-Z3-C011-PT | 3d | 2026-09-02 A | 2027-07-18 | RHD4PRSHLDOSPT1000, RHD4PRSHLSTAGPT1000, RHD4CZ3C011PT1203, RHD4CZ3C011PT1304 | 16% | -169d |
| RHD4CZ3C011PT1403 |  | Primary Test for HDPE Pipline 400 mm - (RD-C-1 /1)-Z3-C011-PT | 2d | 2027-07-19 | 2027-07-20 | RHD4CZ3C011PT1303, RHD4CZ3C011PT5100 |  | -169d |
| RHD4CZ3C011PT1503 |  | Backfilling and warning tape works for HDPE Pipline 400 mm - (RD-C-1 /1)-Z3-C011-PT | 3d | 2027-07-21 | 2027-07-24 | RHD4CZ3C011PT1403 |  | -169d |
|  | 1747 | **RHD4-02-002-C011-(PT)-Butterfly Valve Chamber** |  | 2027-07-06 | 2027-07-14 |  |  |  |

| ID | WBS | Task | Duration | Start | Finish | Predecessors | Complete | Total float |
| --- | --- | --- | --- | --- | --- | --- | --- | --- |
| RHD4CZ3C011PT2100 |  | Excavation and Bedding for Butterfly Valve Chamber for Potable Water Network - (RD-C-1 /1)-Z3-C011-PT | 2d | 2027-07-06 | 2027-07-07 | RHD4ENSDZ3APPPT130, RHD4CZ3C011PT1104 |  | -139d |
| RHD4CZ3C011PT2200 |  | PC works for Butterfly Valve Chamber for Potable Water Network - (RD-C-1 /1)-Z3-C011-PT | 2d | 2027-07-08 | 2027-07-10 | RHD4CZ3C011PT2100 |  | -139d |
| RHD4CZ3C011PT2300 |  | Installation for Butterfly Valve Chamber for Potable Water Network - (RD-C-1 /1)-Z3-C011-PT | 2d | 2027-07-11 | 2027-07-12 | RHD4PRSHLDOSPT1100, RHD4PRSHLDOSPT1400, RHD4PRSHLSTAGPT1100, RHD4PRSHLSTAGPT1400, RHD4CZ3C011PT2200 |  | -139d |
| RHD4CZ3C011PT2400 |  | Backfilling works for Butterfly Valve Chamber for Potable Water Network - (RD-C-1 /1)-Z3-C011-PT | 2d | 2027-07-13 | 2027-07-14 | RHD4CZ3C011PT2300 |  | -139d |
|  | 1748 | **RHD4-02-002-C011-(PT)-Butterfly Valves** |  | 2027-07-13 | 2027-07-17 |  |  |  |
| RHD4CZ3C011PT3101 |  | Installation for Butterfly Valves for Potable Water Network - (RD-C-1 /1)-Z3-C011-PT | 2d | 2027-07-13 | 2027-07-14 | RHD4PRSHLDOSPT1200, RHD4PRSHLSTAGPT1200, RHD4CZ3C011PT2300 |  | -139d |
| RHD4CZ3C011PT3201 |  | Stem and Service box for Butterfly Valves for Potable Water Network - (RD-C-1 /1)-Z3-C011-PT | 2d | 2027-07-15 | 2027-07-17 | RHD4PRSHLDOSPT1300, RHD4PRSHLSTAGPT1300, RHD4CZ3C011PT3101, RHD4CZ3C011PT2400 |  | -139d |
|  | 1749 | **RHD4-02-002-C011-(PT)-Wash out Valve Chambers** |  | 2027-07-06 | 2027-07-14 |  |  |  |
| RHD4CZ3C011PT2101 |  | Excavation and Bedding for Wash out Valve Chambers for Potable Water Network - (RD-C-1 /1)-Z3-C011-PT | 2d | 2027-07-06 | 2027-07-07 | RHD4ENSDZ3APPPT130, RHD4CZ3C011PT1104 |  | -139d |
| RHD4CZ3C011PT2201 |  | PC works for Wash out Valve Chambers for Potable Water Network - (RD-C-1 /1)-Z3-C011-PT | 2d | 2027-07-08 | 2027-07-10 | RHD4CZ3C011PT2101 |  | -139d |
| RHD4CZ3C011PT2301 |  | Installation for Wash out Valve Chambers for Potable Water Network - (RD-C-1 /1)-Z3-C011-PT | 2d | 2027-07-11 | 2027-07-12 | RHD4PRSHLDOSPT1100, RHD4PRSHLDOSPT1400, RHD4PRSHLSTAGPT1100, RHD4PRSHLSTAGPT1400, RHD4CZ3C011PT2201 |  | -139d |
| RHD4CZ3C011PT2401 |  | Backfilling works for Wash out Valve Chambers for Potable Water Network - (RD-C-1 /1)-Z3-C011-PT | 2d | 2027-07-13 | 2027-07-14 | RHD4CZ3C011PT2301 |  | -139d |
|  | 1750 | **RHD4-02-002-C011-(PT)-Wash out Valves** |  | 2027-07-13 | 2027-07-17 |  |  |  |
| RHD4CZ3C011PT3102 |  | Installation for Wash out Valves for Potable Water Network - (RD-C-1 /1)-Z3-C011-PT | 2d | 2027-07-13 | 2027-07-14 | RHD4PRSHLDOSPT1200, RHD4PRSHLSTAGPT1200, RHD4CZ3C011PT2301 |  | -139d |
| RHD4CZ3C011PT3202 |  | Stem and Service box for Wash out Valves for Potable Water Network - (RD-C-1 /1)-Z3-C011-PT | 2d | 2027-07-15 | 2027-07-17 | RHD4PRSHLDOSPT1300, RHD4PRSHLSTAGPT1300, RHD4CZ3C011PT3102, RHD4CZ3C011PT2401 |  | -139d |
|  | 1751 | **RHD4-02-002-C011-(PT)-Air Valve Chambers** |  | 2027-07-06 | 2027-07-14 |  |  |  |
| RHD4CZ3C011PT2102 |  | Excavation and Bedding for Air Valve Chambers for Potable Water Network - (RD-C-1 /1)-Z3-C011-PT | 2d | 2027-07-06 | 2027-07-07 | RHD4ENSDZ3APPPT130, RHD4CZ3C011PT1104 |  | -161d |
| RHD4CZ3C011PT2202 |  | PC works for Air Valve Chambers for Potable Water Network - (RD-C-1 /1)-Z3-C011-PT | 2d | 2027-07-08 | 2027-07-10 | RHD4CZ3C011PT2102 |  | -161d |
| RHD4CZ3C011PT2302 |  | Installation for Air Valve Chambers for Potable Water Network - (RD-C-1 /1)-Z3-C011-PT | 2d | 2027-07-11 | 2027-07-12 | RHD4PRSHLDOSPT1100, RHD4PRSHLDOSPT1400, RHD4PRSHLSTAGPT1100, RHD4PRSHLSTAGPT1400, RHD4CZ3C011PT2202 |  | -161d |
| RHD4CZ3C011PT2402 |  | Backfilling works for Air Valve Chambers for Potable Water Network - (RD-C-1 /1)-Z3-C011-PT | 2d | 2027-07-13 | 2027-07-14 | RHD4CZ3C011PT2302 |  | -161d |
|  | 1752 | **RHD4-02-002-C011-(PT)-Air Valves** |  | 2027-07-13 | 2027-07-17 |  |  |  |
| RHD4CZ3C011PT3103 |  | Installation for Air Valves for Potable Water Network - (RD-C-1 /1)-Z3-C011-PT | 2d | 2027-07-13 | 2027-07-14 | RHD4PRSHLDOSPT1200, RHD4PRSHLSTAGPT1200, RHD4CZ3C011PT2302 |  | -161d |
| RHD4CZ3C011PT3203 |  | Stem and Service box for Air Valves for Potable Water Network - (RD-C-1 /1)-Z3-C011-PT | 2d | 2027-07-15 | 2027-07-17 | RHD4PRSHLDOSPT1300, RHD4PRSHLSTAGPT1300, RHD4CZ3C011PT3103, RHD4CZ3C011PT2402 |  | -161d |
|  | 1753 | **RHD4-02-002-C011-(PT)-Fire Hydrant** |  | 2027-07-26 | 2027-08-11 |  |  |  |
| RHD4CZ3C011PT4100 |  | Excavation and Bedding and Pipe Installation for Fire Hydrant - (RD-C-1 /1)-Z3-C011-PT | 4d | 2027-07-26 | 2027-07-29 | RHD4ENSDZ3APPPT130, RHD4CZ3C011PT1504, RHD4CZ3C011PT1503 |  | -139d |
| RHD4CZ3C011PT4200 |  | Valve Installation for Fire Hydrant - (RD-C-1 /1)-Z3-C011-PT | 3d | 2027-07-31 | 2027-08-02 | RHD4CZ3C011PT4100 |  | -139d |
| RHD4CZ3C011PT4300 |  | Stem for Fire Hydrant - (RD-C-1 /1)-Z3-C011-PT | 3d | 2027-08-03 | 2027-08-05 | RHD4CZ3C011PT4200 |  | -139d |
| RHD4CZ3C011PT4400 |  | Fire Installation for Fire Hydrant - (RD-C-1 /1)-Z3-C011-PT | 3d | 2027-08-07 | 2027-08-09 | RHD4PRSHLDOSPT1500, RHD4PRSHLSTAGPT1500, RHD4CZ3C011PT4300 |  | -139d |
| RHD4CZ3C011PT4500 |  | Protection Barriers for Fire Hydrant - (RD-C-1 /1)-Z3-C011-PT | 2d | 2027-08-10 | 2027-08-11 | RHD4CZ3C011PT4400 |  | -139d |
|  | 1754 | **RHD4-02-002-C011-(PT)-Concrete Encasement** |  | 2027-07-15 | 2027-07-18 |  |  |  |
| RHD4CZ3C011PT5100 |  | Pipe Encasement for Potable Pipelines - (RD-C-1 /1)-Z3-C011-PT | 3d | 2027-07-15 | 2027-07-18 | RHD4CZ3C011PT1304 FF, RHD4CZ3C011PT1303 FF, RHD4CZ3C011PT1304 SS, RHD4CZ3C011PT1303 SS, RHD4CZ3C011PT1203, RHD4CZ3C011PT1204 |  | -169d |
|  | 1755 | **RHD4-02-002-Z3-C011-Irrigation Network - IRR** |  | 2026-08-29 | 2027-09-26 |  |  |  |
|  | 1770 | **RHD4-02-002-C011-(IRR)-Air Valves** |  | 2027-08-17 | 2027-08-21 |  |  |  |
| RHD4CZ3C011IRR3103 |  | Installation for Air Valves for Irrigation Network - (RD-C-1 /1)-Z3-C011-IRR | 2d | 2027-08-17 | 2027-08-18 | RHD4PRSHLDOSIRR1100, RHD4PRSHLSTAGIRR1100, RHD4CZ3C011IRR2402, RHD4CZ3C011IRR1300 |  | -169d |
| RHD4CZ3C011IRR3203 |  | Stem and Service box for Air Valves for Irrigation Network - (RD-C-1 /1)-Z3-C011-IRR | 2d | 2027-08-19 | 2027-08-21 | RHD4PRSHLDOSIRR1300, RHD4PRSHLSTAGIRR1300, RHD4CZ3C011IRR3103 |  | -169d |
|  | 1758 | **RHD4-02-002-C011-(IRR)-HDPE Pipes - 200 mm diameter** |  |  |  |  |  |  |
|  | 6107 | **RHD4-02-002-C011-(IRR)-HDPE Pipes - 160 mm diameter** |  | 2026-08-29 | 2027-08-16 |  |  |  |
| RHD4CZ3C011IRR1100 |  | Excavation works for HDPE Pipline 160 mm - (RD-C-1 /1)-Z3-C011-IRR | 2d | 2026-08-29 A | 2027-08-07 | RHD4CZ3C011IRR1104 | 7% | -169d |
| RHD4CZ3C011IRR1200 |  | Bedding works for HDPE Pipline 160 mm - (RD-C-1 /1)-Z3-C011-IRR | 2d | 2026-08-30 A | 2027-08-09 | RHD4CZ3C011IRR1100 | 7% | -165d |
| RHD4CZ3C011IRR1300 |  | Installing for HDPE Pipline 160 mm - (RD-C-1 /1)-Z3-C011-IRR | 2d | 2026-08-31 A | 2027-08-11 | RHD4CZ3C011IRR1200 | 7% | -165d |
| RHD4CZ3C011IRR1400 |  | Primary Test for HDPE Pipline 160 mm - (RD-C-1 /1)-Z3-C011-IRR | 2d | 2027-08-12 | 2027-08-14 | RHD4CZ3C011IRR1300 |  | -158d |
| RHD4CZ3C011IRR1500 |  | Backfilling and warning tape works for HDPE Pipline 160 mm - (RD-C-1 /1)-Z3-C011-IRR | 2d | 2027-08-15 | 2027-08-16 | RHD4CZ3C011IRR1400 |  | -158d |
|  | 6111 | **RHD4-02-002-C011-(IRR)-HDPE Pipes - 315 mm diameter** |  | 2026-08-29 | 2027-09-15 |  |  |  |
| RHD4CZ3C011IRR1104 |  | Excavation works for HDPE Pipline 315 mm - (RD-C-1 /1)-Z3-C011-IRR | 8d | 2026-08-29 A | 2027-08-04 | RHD4CZ3C011RW3003 FF, RHD4CZ3C011PT1503 | 4% | -169d |
| RHD4CZ3C011IRR1204 |  | Bedding works for HDPE Pipline 315 mm - (RD-C-1 /1)-Z3-C011-IRR | 10d | 2026-08-30 A | 2027-08-16 | RHD4CZ3C011IRR1104 | 4% | -146d |
| RHD4CZ3C011IRR1304 |  | Installing for HDPE Pipline 315 mm - (RD-C-1 /1)-Z3-C011-IRR | 16d | 2026-08-31 A | 2027-08-28 | RHD4CZ3C011IRR1204 | 4% | -146d |
| RHD4CZ3C011IRR1404 |  | Primary Test for HDPE Pipline 315 mm - (RD-C-1 /1)-Z3-C011-IRR | 6d | 2027-08-29 | 2027-09-04 | RHD4CZ3C011IRR1304 |  | -146d |
| RHD4CZ3C011IRR1504 |  | Backfilling and warning tape works for HDPE Pipline 315 mm - (RD-C-1 /1)-Z3-C011-IRR | 10d | 2027-09-05 | 2027-09-15 | RHD4CZ3C011IRR1404 |  | -146d |
|  | 6115 | **RHD4-02-002-C011-(IRR)-Gate Valves (Direct Buried)** |  | 2027-09-16 | 2027-09-26 |  |  |  |
| RHD4CZ3C011IRR3100 |  | Installation for Direct Buried Gate Valves - (RD-C-1 /1)-Z3-C011-IRR | 4d | 2027-09-16 | 2027-09-20 | RHD4CZ3C011IRR1304 SS, RHD4CZ3C011IRR1304 FF, RHD4CZ3C011IRR1300 SS, RHD4CZ3C011IRR1300 FF, RHD4CZ3C011IRR1504 |  | -146d |
| RHD4CZ3C011IRR3200 |  | Stem and Service box for Direct Buried Gate Valves - (RD-C-1 /1)-Z3-C011-IRR | 4d | 2027-09-21 | 2027-09-26 | RHD4CZ3C011IRR3100, RHD4CZ3C011IRR1500 |  | -146d |
|  | 6116 | **RHD4-02-002-C011-(IRR)-Butterfly Valve Chamber** |  | 2027-08-17 | 2027-08-25 |  |  |  |
| RHD4CZ3C011IRR2100 |  | Excavation and Bedding for Butterfly Valve Chamber for Irrigation Network - (RD-C-1 /1)-Z3-C011-IRR | 2d | 2027-08-17 | 2027-08-18 | RHD4CZ3C011IRR1500 |  | -158d |
| RHD4CZ3C011IRR2200 |  | PC works for Butterfly Valve Chamber for Irrigation Network - (RD-C-1 /1)-Z3-C011-IRR | 2d | 2027-08-19 | 2027-08-21 | RHD4CZ3C011IRR2100 |  | -158d |
| RHD4CZ3C011IRR2300 |  | Installation for Butterfly Valve Chamber for Irrigation Network - (RD-C-1 /1)-Z3-C011-IRR | 2d | 2027-08-22 | 2027-08-23 | RHD4CZ3C011IRR2200 |  | -158d |
| RHD4CZ3C011IRR2400 |  | Backfilling works for Butterfly Valve Chamber for Irrigation Network - (RD-C-1 /1)-Z3-C011-IRR | 2d | 2027-08-24 | 2027-08-25 | RHD4CZ3C011IRR2300 |  | -158d |
|  | 6117 | **RHD4-02-002-C011-(IRR)-Butterfly Valves** |  | 2027-08-24 | 2027-08-28 |  |  |  |
| RHD4CZ3C011IRR3101 |  | Installation for Butterfly Valves for Irrigation Network - (RD-C-1 /1)-Z3-C011-IRR | 2d | 2027-08-24 | 2027-08-25 | RHD4CZ3C011IRR2300 |  | -158d |
| RHD4CZ3C011IRR3201 |  | Stem and Service box for Butterfly Valves for Irrigation Network - (RD-C-1 /1)-Z3-C011-IRR | 2d | 2027-08-26 | 2027-08-28 | RHD4CZ3C011IRR3101, RHD4CZ3C011IRR2400 |  | -158d |
|  | 6685 | **RHD4-02-002-C011-(IRR)-Wash out Chamber** |  | 2027-08-08 | 2027-08-16 |  |  |  |
| RHD4CZ3C011IRR2101 |  | Excavation and Bedding for Wash out Chamber for Irrigation Network - (RD-C-1 /1)-Z3-C011-IRR | 2d | 2027-08-08 | 2027-08-09 | RHD4CZ3C011IRR2102 SS |  | -158d |
| RHD4CZ3C011IRR2201 |  | PC works for Wash out Chamber for Irrigation Network - (RD-C-1 /1)-Z3-C011-IRR | 2d | 2027-08-10 | 2027-08-11 | RHD4CZ3C011IRR2101 |  | -158d |
| RHD4CZ3C011IRR2301 |  | Installation for Wash out Chamber for Irrigation Network - (RD-C-1 /1)-Z3-C011-IRR | 2d | 2027-08-12 | 2027-08-14 | RHD4CZ3C011IRR2201 |  | -158d |
| RHD4CZ3C011IRR2401 |  | Backfilling works for Wash out Chamber for Irrigation Network - (RD-C-1 /1)-Z3-C011-IRR | 2d | 2027-08-15 | 2027-08-16 | RHD4CZ3C011IRR2301 |  | -158d |
|  | 6686 | **RHD4-02-002-C011-(IRR)-Wash out Valves** |  | 2027-08-15 | 2027-08-18 |  |  |  |
| RHD4CZ3C011IRR3102 |  | Installation for Wash out Valve for Irrigation Network - (RD-C-1 /1)-Z3-C011-IRR | 2d | 2027-08-15 | 2027-08-16 | RHD4CZ3C011IRR2301 |  | -158d |
| RHD4CZ3C011IRR3202 |  | Stem and Service box for Wash out Valve for Irrigation Network - (RD-C-1 /1)-Z3-C011-IRR | 2d | 2027-08-17 | 2027-08-18 | RHD4CZ3C011IRR3102, RHD4CZ3C011IRR2401 |  | -158d |
|  | 1769 | **RHD4-02-002-C011-(IRR)-Air Valve Chamber** |  | 2027-08-08 | 2027-08-16 |  |  |  |
| RHD4CZ3C011IRR2102 |  | Excavation and Bedding for Valve Chamber for Irrigation Network - (RD-C-1 /1)-Z3-C011-IRR | 2d | 2027-08-08 | 2027-08-09 | RHD4ENSDZ3APPIRR140, RHD4CZ3C011IRR1100 |  | -169d |
| RHD4CZ3C011IRR2202 |  | PC works for Valve Chamber for Irrigation Network - (RD-C-1 /1)-Z3-C011-IRR | 2d | 2027-08-10 | 2027-08-11 | RHD4CZ3C011IRR2102 |  | -169d |

| ID | WBS | Task | Duration | Start | Finish | Predecessors | Complete | Total float |
| --- | --- | --- | --- | --- | --- | --- | --- | --- |
| RHD4CZ3C011IRR2302 |  | Installation for Valve Chamber for Irrigation Network - (RD-C-1 /1)-Z3-C011-IRR | 2d | 2027-08-12 | 2027-08-14 | RHD4PRSHLDOSIRR1200, RHD4PRSHLDOSIRR1400, RHD4PRSHLSTAGIRR1200, RHD4PRSHLSTAGIRR1400, RHD4CZ3C011IRR2202 |  | -169d |
| RHD4CZ3C011IRR2402 |  | Backfilling works for Valve Chamber for Irrigation Network - (RD-C-1 /1)-Z3-C011-IRR | 2d | 2027-08-15 | 2027-08-16 | RHD4CZ3C011IRR2302 |  | -169d |
|  | 1771 | **RHD4-02-002-C011-(IRR)-Concrete Encasement** |  |  |  |  |  |  |
|  | 1789 | **RHD4-02-002-Z3-C011-Medium Voltage Network - MV** |  | 2027-01-20 | 2027-08-21 |  |  |  |
|  | 1790 | **RHD4-02-002-C011-(MV)-Medium Voltage cable trench** |  | 2027-06-19 | 2027-08-03 |  |  |  |
| RHD4CZ3C011MV1100 |  | Excavation for Medium Voltage Trench - (RD-C-1 /1)-Z3-C011-MV | 12d | 2027-06-19 | 2027-07-01 | RHD4ENSDZ3APPMV150, RHD4CZ3C011MV2100, RHD4CZ1C081MV1100 SS |  | -169d |
| RHD4CZ3C011MV1200 |  | Trench Backfilling for Medium Voltage Network - (RD-C-1 /1)-Z3-C011-MV | 7d | 2027-07-27 | 2027-08-03 | RHD4CZ3C011MV3200, RHD4CZ3C011MV3101 |  | -169d |
|  | 1791 | **RHD4-02-002-C011-(MV)-Medium Voltage duct banks** |  | 2027-01-20 | 2027-02-02 |  |  |  |
| RHD4CZ3C011MV2100 |  | Excavation of Duct Banks for Medium Voltage Network - (RD-C-1 /1)-Z3-C011-MV | 3d | 2027-01-20 | 2027-01-23 | RHD4ENSDZ3APPMV150, RHD4CZ3C011RD1100 |  | -120d |
| RHD4CZ3C011MV2200 |  | Installation of Duct Banks for Medium Voltage Network - (RD-C-1 /1)-Z3-C011-MV | 4d | 2027-01-24 | 2027-01-27 | RHD4PRSHLDOSMV1000, RHD4PRSHLSTAGMV1000, RHD4CZ3C011MV2100 |  | -120d |
| RHD4CZ3C011MV2300 |  | Pouring of Duct Banks for Medium Voltage Network - (RD-C-1 /1)-Z3-C011-MV | 3d | 2027-01-28 | 2027-01-31 | RHD4CZ3C011MV2200 |  | -120d |
| RHD4CZ3C011MV2400 |  | Backfilling of Duct Banks for Medium Voltage Network - (RD-C-1 /1)-Z3-C011-MV | 2d | 2027-02-01 | 2027-02-02 | RHD4CZ3C011MV2300 |  | -120d |
|  | 1792 | **RHD4-02-002-C011-(MV)-Medium Voltage cables 3Cx 500 mm²** |  | 2027-07-03 | 2027-08-21 |  |  |  |
| RHD4CZ3C011MV3100 |  | Installation of Medium Voltage Cables 3Cx 500 mm² - (RD-C-1 /1)-Z3-C011-MV | 12d | 2027-07-03 | 2027-07-15 | RHD4PRSHLDOSMV1100, RHD4ENMSMV2000, RHD4ENMSMV2010, RHD4PRSHLSTAGMV1100, RHD4CZ3C011MV1100 |  | -169d |
| RHD4CZ3C011MV3200 |  | Joints Installation of Medium Voltage Cables 3Cx 500 mm² - (RD-C-1 /1)-Z3-C011-MV | 9d | 2027-07-17 | 2027-07-26 | RHD4PRSHLDOSMV1300, RHD4PRSHLSTAGMV1300, RHD4CZ3C011MV3100 |  | -169d |
| RHD4CZ3C011MV3300 |  | Testing of Medium Voltage Cables 3Cx 500 mm² - (RD-C-1 /1)-Z3-C011-MV | 13d | 2027-08-04 | 2027-08-18 | RHD4CZ3C011MV3200, RHD4CZ3C011MV1200, RHD4CZ3C011MV4200 |  | -169d |
| RHD4CZ3C011MV3400 |  | Termination of Medium Voltage Cables 3Cx 500 mm² - (RD-C-1 /1)-Z3-C011-MV | 2d | 2027-08-19 | 2027-08-21 | RHD4CZ3C011MV3300, RHD4CZ3C011MV5400 |  | -169d |
|  | 1793 | **RHD4-02-002-C011-(MV)-Medium Voltage cables 3Cx 50 mm²** |  | 2027-07-03 | 2027-08-12 |  |  |  |
| RHD4CZ3C011MV3101 |  | Installation of Medium Voltage Cables 3Cx 50 mm² - (RD-C-1 /1)-Z3-C011-MV | 2d | 2027-07-03 | 2027-07-04 | RHD4PRSHLDOSMV1200, RHD4ENMSMV2000, RHD4ENMSMV2010, RHD4PRSHLSTAGMV1200, RHD4CZ3C011MV1100 |  | -150d |
| RHD4CZ3C011MV3301 |  | Testing of Medium Voltage Cables 3Cx 50 mm² - (RD-C-1 /1)-Z3-C011-MV | 2d | 2027-08-04 | 2027-08-05 | RHD4CZ3C011MV3101, RHD4CZ3C011MV1200 |  | -156d |
| RHD4CZ3C011MV3401 |  | Termination of Medium Voltage Cables 3Cx 50 mm² - (RD-C-1 /1)-Z3-C011-MV | 2d | 2027-08-11 | 2027-08-12 | RHD4CZ3C011MV3301, RHD4CZ3C011MV5400 |  | -160d |
|  | 1794 | **RHD4-02-002-C011-(MV)-Normally open Point (Outdoor Type)** |  | 2027-07-14 | 2027-07-18 |  |  |  |
| RHD4CZ3C011MV4100 |  | Installation for Normally open Point - (RD-C-1 /1)-Z3-C011-MV | 2d | 2027-07-14 | 2027-07-15 | RHD4PRSHLDOSMV1400, RHD4PRSHLSTAGMV1400, RHD4CZ3C011MV3101 SS, RHD4CZ3C011MV3100 FF |  | -155d |
| RHD4CZ3C011MV4200 |  | Termination for Normally open Point - (RD-C-1 /1)-Z3-C011-MV | 2d | 2027-07-17 | 2027-07-18 | RHD4CZ3C011MV4100 |  | -155d |
|  | 1795 | **RHD4-02-002-C011-(MV)-Unit Substations** |  | 2027-07-27 | 2027-08-10 |  |  |  |
| RHD4CZ3C011MV5100 |  | Excavation for Unit Substations for Medium Voltage Network - (RD-C-1 /1)-Z3-C011-MV | 2d | 2027-07-27 | 2027-07-28 | RHD4ENSDZ3APPMV150, RHD4CZ3C011MV1200 SS |  | -162d |
| RHD4CZ3C011MV5200 |  | Concrete Base Placement for Unit Substations for Medium Voltage Network - (RD-C-1 /1)-Z3-C011-MV | 2d | 2027-07-29 | 2027-07-31 | RHD4CZ3C011MV5100 |  | -162d |
| RHD4CZ3C011MV5300 |  | Installation for Fences and doors for Medium Voltage Network - (RD-C-1 /1)-Z3-C011-MV | 5d | 2027-08-01 | 2027-08-05 | RHD4CZ3C011MV5200 |  | -162d |
| RHD4CZ3C011MV5400 |  | Installation for Unit Substations for Medium Voltage Network - (RD-C-1 /1)-Z3-C011-MV | 4d | 2027-08-07 | 2027-08-10 | RHD4PRLOLSTAGMV1601, RHD4PRLOLSTAGMV1602, RHD4CZ3C011MV5300, RHD4CZ4L09SL5200 |  | -162d |
|  | 1796 | **RHD4-02-002-Z3-C011-Low Voltage Network - LV** |  | 2027-07-18 | 2027-08-19 |  |  |  |
|  | 1797 | **RHD4-02-002-C011-(LV)-Low Voltage duct banks** |  | 2027-07-18 | 2027-07-31 |  |  |  |
| RHD4CZ3C011LV2100 |  | Excavation of Duct Banks for Low Voltage Network - (RD-C-1 /1)-Z3-C011-LV | 3d | 2027-07-18 | 2027-07-20 | RHD4ENSDZ3APPLV160, RHD4CZ3C011RW3003, RHD4CZ3C011PT3203 |  | -161d |
| RHD4CZ3C011LV2200 |  | Installation of Duct Banks for Low Voltage Network - (RD-C-1 /1)-Z3-C011-LV | 4d | 2027-07-21 | 2027-07-25 | RHD4PRSHLDOSLV1000, RHD4PRSHLSTAGLV1000, RHD4CZ3C011LV2100 |  | -161d |
| RHD4CZ3C011LV2300 |  | Pouring of Duct Banks for Low Voltage Network - (RD-C-1 /1)-Z3-C011-LV | 3d | 2027-07-26 | 2027-07-28 | RHD4CZ3C011LV2200 |  | -161d |
| RHD4CZ3C011LV2400 |  | Backfilling of Duct Banks for Low Voltage Network - (RD-C-1 /1)-Z3-C011-LV | 2d | 2027-07-29 | 2027-07-31 | RHD4CZ3C011LV2300 |  | -161d |
|  | 1799 | **RHD4-02-002-C011-(LV)-Low Voltage cables** |  | 2027-08-04 | 2027-08-12 |  |  |  |
| RHD4CZ3C011LV3100 |  | Excavation for Low Voltage Cables for Low Voltage Network - (RD-C-1 /1)-Z3-C011-LV | 2d | 2027-08-04 | 2027-08-05 | RHD4ENSDZ3APPLV160, RHD4CZ3C011LV2400, RHD4CZ3C011MV1200 |  | -164d |
| RHD4CZ3C011LV3200 |  | Cable Laying of Low Voltage Cables for Low Voltage Network - (RD-C-1 /1)-Z3-C011-LV | 2d | 2027-08-07 | 2027-08-08 | RHD4PRSHLDOSLV1100, RHD4ENMSLV2000, RHD4ENMSLV2010, RHD4PRSHLSTAGLV1100, RHD4CZ3C011LV3100 |  | -164d |
| RHD4CZ3C011LV3300 |  | Warning tape and Backfill for Low Voltage Cables for Low Voltage Network - (RD-C-1 /1)-Z3-C011-LV | 2d | 2027-08-09 | 2027-08-10 | RHD4CZ3C011LV3200 |  | -164d |
| RHD4CZ3C011LV3400 |  | Testing of Low Voltage Cables for Low Voltage Network - (RD-C-1 /1)-Z3-C011-LV | 2d | 2027-08-11 | 2027-08-12 | RHD4CZ3C011LV3300 |  | -164d |
|  | 1800 | **RHD4-02-002-C011-(LV)-Low Voltage Distribution Pillars** |  | 2027-08-14 | 2027-08-19 |  |  |  |
| RHD4CZ3C011LV4100 |  | Leveling for Distribution Pillars for Low Voltage Network - (RD-C-1 /1)-Z3-C011-LV | 2d | 2027-08-14 | 2027-08-15 | RHD4CZ3C011LV3300, RHD4CZ3C011LV3400 |  | -164d |
| RHD4CZ3C011LV4200 |  | Lean Concrete for Distribution Pillars for Low Voltage Network - (RD-C-1 /1)-Z3-C011-LV | 2d | 2027-08-16 | 2027-08-17 | RHD4CZ3C011LV4100 |  | -164d |
| RHD4CZ3C011LV4300 |  | Installation of Distribution Pillars for Low Voltage Network - (RD-C-1 /1)-Z3-C011-LV | 2d | 2027-08-18 | 2027-08-19 | RHD4PRSHLDOSLV1200, RHD4PRSHLDOSLV1300, RHD4PRSHLSTAGLV1200, RHD4PRSHLSTAGLV1300, RHD4CZ3C011LV4200, RHD4CZ3C011MV3401 |  | -164d |
|  | 1801 | **RHD4-02-002-C011-(LV)-Low Voltage Distribution Pillars Earthing** |  |  |  |  |  |  |
|  | 1802 | **RHD4-02-002-Z3-C011-Street Lighting Network - SL** |  | 2026-08-23 | 2028-01-11 |  |  |  |
|  | 1803 | **RHD4-02-002-C011-(SL)-Street Lighting duct banks** |  | 2026-08-23 | 2026-09-03 |  |  |  |
| RHD4CZ3C011SL2100 |  | Excavation of Duct Banks for Street Lighting Network - (RD-C-1 /1)-Z3-C011-SL | 5d | 2026-08-23 A | 2026-08-27 A | RHD4ENSDZ3APPSL170, RHD4CZ3C011LV2100, RHD4CZ3C011PT3203 | 100% |  |
| RHD4CZ3C011SL2200 |  | Installation of Duct Banks for Street Lighting Network - (RD-C-1 /1)-Z3-C011-SL | 7d | 2026-08-25 A | 2026-09-01 A | RHD4PRSHLDOSSL1000, RHD4PRSHLSTAGSL1000, RHD4CZ3C011SL2100, RHD4CZ3C011LV2200 | 100% |  |
| RHD4CZ3C011SL2300 |  | Pouring of Duct Banks for Street Lighting Network - (RD-C-1 /1)-Z3-C011-SL | 2d | 2026-09-01 A | 2026-09-02 A | RHD4CZ3C011SL2200, RHD4CZ3C011LV2300 | 100% |  |
| RHD4CZ3C011SL2400 |  | Backfilling of Duct Banks for Street Lighting Network - (RD-C-1 /1)-Z3-C011-SL | 2d | 2026-09-02 A | 2026-09-03 A | RHD4CZ3C011SL2300, RHD4CZ3C011LV2400, RHD4CZ3C011ST4600 | 100% |  |
|  | 1804 | **RHD4-02-002-C011-(SL)-Street Lighting Drawpit** |  | 2027-08-22 | 2027-08-28 |  |  |  |
| RHD4CZ3C011SL5100 |  | Excavation of Drawpit size 600x600x900mm for Street Lighting Network - (RD-C-1 /1)-Z3-C011-SL | 2d | 2027-08-22 | 2027-08-23 | RHD4ENSDZ3APPSL170, RHD4CZ3C011SL2300, RHD4CZ3C011MV3400 |  | -169d |
| RHD4CZ3C011SL5200 |  | Installation of Drawpit size 600x600x900mm for Street Lighting Network - (RD-C-1 /1)-Z3-C011-SL | 4d | 2027-08-24 | 2027-08-28 | RHD4PRSHLDOSSL1400, RHD4PRSHLSTAGSL1400, RHD4CZ3C011SL5100 |  | -169d |
|  | 1805 | **RHD4-02-002-C011-(SL)-Street Lighting cables** |  | 2027-10-17 | 2027-12-18 |  |  |  |
| RHD4CZ3C011SL3100 |  | Excavation for Street Lighting Cables for Street Lighting Network - (RD-C-1 /1)-Z3-C011-SL | 14d | 2027-10-17 | 2027-11-01 | RHD4ENSDZ3APPSL170, RHD4CZ3C011SL1300, RHD4CZ3L122MV3301 |  | -198d |
| RHD4CZ3C011SL3200 |  | Cable Laying of Street Lighting Cables for Street Lighting Network - (RD-C-1 /1)-Z3-C011-SL | 12d | 2027-11-02 | 2027-11-15 | RHD4PRSHLDOSSL1100, RHD4ENMSSL2000, RHD4ENMSSL2010, RHD4PRSHLSTAGSL1100, RHD4CZ3C011SL3100, RHD4CZ5RA07RD7100, RHD4CZ3C011IRR3200 |  | -177d |
| RHD4CZ3C011SL3300 |  | Warning tape and Backfill for Street Lighting Cables for Street Lighting Network - (RD-C-1 /1)-Z3-C011-SL | 12d | 2027-11-16 | 2027-11-29 | RHD4CZ3C011SL3200 |  | -177d |
| RHD4CZ3C011SL3400 |  | Testing of Street Lighting Cables for Street Lighting Network - (RD-C-1 /1)-Z3-C011-SL | 7d | 2027-12-11 | 2027-12-18 | RHD4CZ3C011SL3300, RHD4CZ3C011LV3400, RHD4CZ3L122LV3400, RHD4CZ3L122LV4300, RHD4CZ2C082ST4600, RHD4CZ9L02TC5200 |  | -155d |
|  | 1806 | **RHD4-02-002-C011-(SL)-Street Lighting Poles** |  | 2027-08-26 | 2028-01-11 |  |  |  |
| RHD4CZ3C011SL1100 |  | Excavation for RC Base for Lighting Poles for Street Lighting Network - (RD-C-1 /1)-Z3-C011-SL | 6d | 2027-08-26 | 2027-09-01 | RHD4ENSDZ3APPSL170, RHD4CZ3C011SL2400, RHD4CZ3C011MV1200, RHD4CZ3C011IRR3203, RHD4CZ3C011MV3400 |  | -173d |
| RHD4CZ3C011SL1200 |  | Installation for RC Base for Lighting Poles for Street Lighting Network - (RD-C-1 /1)-Z3-C011-SL | 6d | 2027-09-02 | 2027-09-08 | RHD4CZ3C011SL1100, RHD4CZ3C011SL5200 |  | -173d |
| RHD4CZ3C011SL1300 |  | Backfill for RC Base for Lighting Poles for Street Lighting Network - (RD-C-1 /1)-Z3-C011-SL | 6d | 2027-09-09 | 2027-09-15 | RHD4CZ3C011SL1200 |  | -173d |
| RHD4CZ3C011SL1400 |  | Installation for Lighting Poles for Street Lighting Network - (RD-C-1 /1)-Z3-C011-SL | 9d | 2027-12-19 | 2027-12-28 | RHD4PRSHLDOSSL1200, RHD4ENMSSL2000, RHD4ENMSSL2010, RHD4PRSHLSTAGSL1200, RHD4CZ3C011SL1300, RHD4CZ3C011SL3400, RHD4CZ3C011LV4300, RHD4CZ3C083CCTV6100, RHD4CZ7C032CCTV4200 |  | -155d |
| RHD4CZ3C011SL1500 |  | Luminaire Installation for Lighting Poles for Street Lighting Network - (RD-C-1 /1)-Z3-C011-SL | 12d | 2027-12-29 | 2028-01-11 | RHD4PRSHLDOSSL1300, RHD4PRSHLSTAGSL1300, RHD4CZ3C011SL1400 |  | -155d |
|  | 1807 | **RHD4-02-002-C011-(SL)-Street Lighting Feeder Pillars** |  | 2027-11-30 | 2027-12-30 |  |  |  |
| RHD4CZ3C011SL4100 |  | Leveling for Distribution Pillars for Street Lighting Network - (RD-C-1 /1)-Z3-C011-SL | 2d | 2027-11-30 | 2027-12-01 | RHD4CZ3C011SL3300, RHD4CZ3C011LV4100 |  | -177d |
| RHD4CZ3C011SL4200 |  | Lean Concrete for Distribution Pillars for Street Lighting Network - (RD-C-1 /1)-Z3-C011-SL | 2d | 2027-12-02 | 2027-12-04 | RHD4CZ3C011SL4100 |  | -177d |
| RHD4CZ3C011SL4300 |  | Installation of Distribution Pillars for Street Lighting Network - (RD-C-1 /1)-Z3-C011-SL | 2d | 2027-12-29 | 2027-12-30 | RHD4CZ3C011SL4200, RHD4CZ3C011SL1400 |  | -154d |
|  | 1808 | **RHD4-02-002-C011-(SL)-Street Lighting Earthing System** |  | 2028-01-01 | 2028-01-02 |  |  |  |

| ID | WBS | Task | Duration | Start | Finish | Predecessors | Complete | Total float |
| --- | --- | --- | --- | --- | --- | --- | --- | --- |
| RHD4CZ3C011SL6100 |  | Installation of Earthing for Lighting Poles and Fedder Pillers for Street Lighting Network - (RD-C-1 /1)-Z3-C011-SL | 2d | 2028-01-01 | 2028-01-02 | RHD4ENMSER2000, RHD4ENMSER2010, RHD4CZ3C011SL4300 |  | -154d |
|  | 1814 | **RHD4-02-002-Z3-C011-Telecommunications Network - TC** |  | 2026-08-25 | 2028-06-25 |  |  |  |
|  | 1815 | **RHD4-02-002-C011-(TC)-Telecommunications Ducts** |  | 2026-08-25 | 2028-06-25 |  |  |  |
| RHD4CZ3C011TC2100 |  | Excavation of HDPE Ducts for Telecom Network - (RD-C-1 /1)-Z3-C011-TC | 3d | 2026-08-25 A | 2028-04-22 | RHD4ENSDZ3APPTC190, RHD4CZ3C011SL4300, RHD4CZ3C083RD5100, RHD4CZ7RA03CCTV1500, RHD4CZ7L015CCTV2100, RHD4CZ7L015RD3200, RHD4CZ8C014ICT5200 | 1% | -177.02d |
| RHD4CZ3C011TC2200 |  | Installation of HDPE Ducts for Telecom Network - (RD-C-1 /1)-Z3-C011-TC | 3d | 2026-08-29 A | 2028-04-25 | RHD4PRSHLDOSTC1000, RHD4PRSHLSTAGTC1000, RHD4CZ3C011TC2100 | 1% | -129.02d |
| RHD4CZ3C011TC2400 |  | Backfilling of HDPE Ducts for Telecom Network - (RD-C-1 /1)-Z3-C011-TC | 3d | 2026-09-01 A | 2028-06-25 | RHD4CZ3C011TC2200, RHD4CZ3C011TC5200, RHD4HOASSWL1APP1300, RHD4GNCCTVZ1FT2000, RHD4GNSTZ6FT1000, RHD4GNSTZ8FT1000, RHD4GNSTZ9FT1000 | 1% | -170d |
|  | 1816 | **RHD4-02-002-C011-(TC)-Telecommunications Manholes** |  | 2028-04-22 | 2028-05-13 |  |  |  |
| RHD4CZ3C011TC5100 |  | Excavation for Manholes for Telecom Network - (RD-C-1 /1)-Z3-C011-TC | 6d | 2028-04-22 | 2028-04-29 | RHD4ENSDZ3APPTC190, RHD4CZ3C011TC2100, RHD4CZ7C013RD8100 |  | -135.02d |
| RHD4CZ3C011TC5200 |  | Installation of Manholes for Telecom Network - (RD-C-1 /1)-Z3-C011-TC | 9d | 2028-04-29 | 2028-05-13 | RHD4PRSHLDOSTC1200, RHD4PRSHLSTAGTC1200, RHD4CZ3C011TC5100, RHD4CZ3C011TC2200 SS |  | -135.02d |
|  | 1817 | **RHD4-02-002-C011-(TC)-Telecomminications Road Crossings** |  |  |  |  |  |  |
|  | 1818 | **RHD4-02-002-Z3-C011-Information and Communication Technologies - ICT** |  | 2026-08-25 | 2028-06-29 |  |  |  |
|  | 1819 | **RHD4-02-002-C011-(ICT)-Information and Communication Technologies Ducts** |  | 2028-04-22 | 2028-06-29 |  |  |  |
| RHD4CZ3C011ICT2100 |  | Excavation of HDPE Ducts for ICT Network - (RD-C-1 /1)-Z3-C011-ICT | 16d | 2028-04-22 | 2028-05-14 | RHD4ENSDZ3APPICT200, RHD4CZ3C011ICT3400, RHD4CZ3C011TC2100 |  | -177.02d |
| RHD4CZ3C011ICT2200 |  | Installation of HDPE Ducts for ICT Network - (RD-C-1 /1)-Z3-C011-ICT | 24d | 2028-05-14 | 2028-06-11 | RHD4PRSHLDOSICT1000, RHD4PRSHLSTAGICT1000, RHD4CZ3C011ICT2100 |  | -177.02d |
| RHD4CZ3C011ICT2400 |  | Backfilling of HDPE Ducts for ICT Network - (RD-C-1 /1)-Z3-C011-ICT | 16d | 2028-06-11 | 2028-06-29 | RHD4CZ3C011ICT2200, RHD4CZ3C011ICT5200 |  | -177.02d |
|  | 1820 | **RHD4-02-002-C011-(ICT)-Information and Communication Technologies Manholes** |  | 2028-05-14 | 2028-06-11 |  |  |  |
| RHD4CZ3C011ICT5100 |  | Excavation for Manholes for ICT Network - (RD-C-1 /1)-Z3-C011-ICT | 12d | 2028-05-14 | 2028-05-28 | RHD4ENSDZ3APPICT200, RHD4CZ3C011ICT2100, RHD4CZ6CH6ST1130 |  | -177.02d |
| RHD4CZ3C011ICT5200 |  | Installation of Manholes for ICT Network - (RD-C-1 /1)-Z3-C011-ICT | 12d | 2028-05-28 | 2028-06-11 | RHD4PRSHLDOSICT1200, RHD4PRSHLSTAGICT1200, RHD4CZ3C011ICT5100, RHD4CZ9L02CCTV1500 |  | -177.02d |
|  | 1821 | **RHD4-02-002-C011-(ICT)-Information and Communication Technologies Road Crossings** |  | 2026-08-25 | 2026-09-03 |  |  |  |
| RHD4CZ3C011ICT3100 |  | Excavation for Road Crossings for ICT Network - (RD-C-1 /1)-Z3-C011-ICT | 2d | 2026-08-25 A | 2026-08-26 A | RHD4ENSDZ3APPICT200, RHD4CZ3C011IRR2302, RHD4CZ3C011PT3203, RHD4CZ3C011PT3203 FF | 100% |  |
| RHD4CZ3C011ICT3200 |  | Installation of Road Crossings for ICT Network - (RD-C-1 /1)-Z3-C011-ICT | 2d | 2026-08-29 A | 2026-08-30 A | RHD4PRSHLDOSICT1100, RHD4PRSHLSTAGICT1100, RHD4CZ3C011ICT3100 | 100% |  |
| RHD4CZ3C011ICT3300 |  | Pouring of Road Crossings for ICT Network - (RD-C-1 /1)-Z3-C011-ICT | 2d | 2026-09-01 A | 2026-09-02 A | RHD4CZ3C011ICT3200 | 100% |  |
| RHD4CZ3C011ICT3400 |  | Backfilling of Road Crossings for ICT Network - (RD-C-1 /1)-Z3-C011-ICT | 2d | 2026-09-02 A | 2026-09-03 A | RHD4CZ3C011ICT3300 | 100% |  |
|  | 1809 | **RHD4-02-002-Z3-C011-Landscape Network - LS** |  |  |  |  |  |  |
|  | 1810 | **RHD4-02-002-C011-(LS)-Landscape Lighting cables** |  |  |  |  |  |  |
|  | 1811 | **RHD4-02-002-C011-(LS)-Landscape Feeder Pillars** |  |  |  |  |  |  |
|  | 1812 | **RHD4-02-002-C011-(LS)-Landscape Bollard Poles** |  |  |  |  |  |  |
|  | 1813 | **RHD4-02-002-C011-(LS)-Landscape Feeder Pillars Earthing** |  |  |  |  |  |  |
|  | 1822 | **RHD4-02-002-Z3-C011-Security Network - CCTV** |  | 2028-02-07 | 2028-07-10 |  |  |  |
|  | 1823 | **RHD4-02-002-C011-(CCTV)-Civil Works** |  | 2028-02-07 | 2028-02-16 |  |  |  |
| RHD4CZ3C011CCTV2100 |  | Civil Works for Security Network - (RD-C-1 /1)-Z3-C011-CCTV | 8d | 2028-02-07 | 2028-02-16 | RHD4GNSLZ9FT1600, RHD4CZ8C014RD8100 |  | -134.02d |
|  | 4851 | **RHD4-02-002-C011-(CCTV)-CCTV Poles** |  | 2028-04-03 | 2028-06-14 |  |  |  |
| RHD4CZ3C011CCTV1100 |  | Excavation for RC Base for CCTV Poles for Security Network - (RD-C-1 /1)-Z3-C011-CCTV | 2d | 2028-04-03 | 2028-04-05 | RHD4CZ3C011CCTV2100, RHD4CZ8A011RD7100 |  | -115.02d |
| RHD4CZ3C011CCTV1200 |  | Installation for RC Base for CCTV Poles for Security Network - (RD-C-1 /1)-Z3-C011-CCTV | 2d | 2028-05-22 | 2028-05-24 | RHD4CZ3C011CCTV1100, RHD4CZ7C02RD8100 |  | -152.02d |
| RHD4CZ3C011CCTV1300 |  | Backfill for RC Base for CCTV Poles for Security Network - (RD-C-1 /1)-Z3-C011-CCTV | 2d | 2028-05-24 | 2028-05-27 | RHD4CZ3C011CCTV1200, RHD4CZ8C014RD7100 |  | -152.02d |
| RHD4CZ3C011CCTV1400 |  | Installation for CCTV Poles for Security Network - (RD-C-1 /1)-Z3-C011-CCTV | 2d | 2028-06-07 | 2028-06-10 | RHD4CZ3C011CCTV1300, RHD4CZ7C02RD7100, RHD4CZ8RA04RD8100 |  | -162.06d |
| RHD4CZ3C011CCTV1500 |  | Protection post Installation for CCTV Poles for Security Network - (RD-C-1 /1)-Z3-C011-CCTV | 4d | 2028-06-10 | 2028-06-14 | RHD4CZ3C011CCTV1400 |  | -162.06d |
|  | 4852 | **RHD4-02-002-C011-(CCTV)-Camera** |  | 2028-06-13 | 2028-06-15 |  |  |  |
| RHD4CZ3C011CCTV3100 |  | Installation for Cameras for Security Network - (RD-C-1 /1)-Z3-C011-CCTV | 2d | 2028-06-13 | 2028-06-15 | RHD4CZ3C011CCTV1400, RHD4CZ3C011CCTV4100 |  | -163.02d |
|  | 4853 | **RHD4-02-002-C011-(CCTV)-Power and Infrastructure** |  | 2028-06-11 | 2028-07-02 |  |  |  |
| RHD4CZ3C011CCTV4100 |  | Installation of Power outlet, UPS and midspan for PTZ Camerafor Cameras for Security Network - (RD-C-1 /1)-Z3-C011-CCTV | 2d | 2028-06-11 | 2028-06-13 | RHD4CZ3C011CCTV1400, RHD4CZ3C011ICT5200 |  | -163.02d |
| RHD4CZ3C011CCTV4200 |  | Short Range Wireless PoP wireless Bridgefor CCTV Poles for Security Network - (RD-C-8 /3)-Z3-C083-CCTV | 2d | 2028-06-29 | 2028-07-02 | RHD4CZ3C011CCTV4100, RHD4CZ3C011ICT2400 |  | -177.02d |
|  | 4855 | **RHD4-02-002-C011-(CCTV)-CCTV Panels and Components** |  | 2028-07-02 | 2028-07-10 |  |  |  |
| RHD4CZ3C011CCTV6100 |  | Installation for CCTV Panels for Security Network - (RD-C-1 /1)-Z3-C011-CCTV | 7d | 2028-07-02 | 2028-07-10 | RHD4CZ3C011CCTV3100, RHD4CZ3C011CCTV1500, RHD4CZ3C011CCTV4200 |  | -177.02d |
|  | 1839 | **RHD4-02-002-Z3-L122** |  | 2026-08-04 | 2028-10-26 |  |  |  |
|  | 1870 | **RHD4-02-002-Z3-L122-Crossings Sewage Network - SWCr** |  |  |  |  |  |  |
|  | 1880 | **RHD4-02-002-L122-(SWCr)-MH Works - 1200 mm diameter** |  |  |  |  |  |  |
|  | 1873 | **RHD4-02-002-L122-(SWCr)-GRP Pipes - 500 mm diameter** |  |  |  |  |  |  |
|  | 1872 | **RHD4-02-002-L122-(SWCr)-GRP Pipes - 400 mm diameter** |  |  |  |  |  |  |
|  | 1871 | **RHD4-02-002-L122-(SWCr)-GRP Pipes - 300 mm diameter** |  |  |  |  |  |  |
|  | 1878 | **RHD4-02-002-L122-(SWCr)-HDPE Pipes - 400 mm diameter** |  |  |  |  |  |  |
|  | 1884 | **RHD4-02-002-L122-(SWCr)-Wash out Chambers** |  |  |  |  |  |  |
|  | 1885 | **RHD4-02-002-L122-(SWCr)-Wash out Valves** |  |  |  |  |  |  |
|  | 1886 | **RHD4-02-002-L122-(SWCr)-Air Valve Chambers** |  |  |  |  |  |  |
|  | 1887 | **RHD4-02-002-L122-(SWCr)-Air Valves** |  |  |  |  |  |  |
|  | 1888 | **RHD4-02-002-L122-(SWCr)-Butterfly Valve Chambers** |  |  |  |  |  |  |
|  | 1889 | **RHD4-02-002-L122-(SWCr)-Butterfly Valves** |  |  |  |  |  |  |
|  | 1914 | **RHD4-02-002-Z3-L122-Crossings Potable Network - PTCr** |  |  |  |  |  |  |
|  | 1918 | **RHD4-02-002-L122-(PTCr)-HDPE Pipes - 400 mm diameter** |  |  |  |  |  |  |
|  | 1921 | **RHD4-02-002-L122-(PTCr)-Butterfly Valve Chamber** |  |  |  |  |  |  |
|  | 1922 | **RHD4-02-002-L122-(PTCr)-Butterfly Valves** |  |  |  |  |  |  |
|  | 1961 | **RHD4-02-002-Z3-L122-Crossings Irrigation Network - IRRC** |  |  |  |  |  |  |
|  | 1966 | **RHD4-02-002-L122-(IRRC)-HDPE Pipes - 315 mm diameter** |  |  |  |  |  |  |
|  | 2018 | **RHD4-02-002-Z3-L122-Road Works - RD** |  | 2027-02-23 | 2028-10-26 |  |  |  |
|  | 2019 | **RHD4-02-002-L122-(RD)-Subgrade** |  | 2027-02-23 | 2027-02-28 |  |  |  |
| RHD4CZ3L122RD1100 |  | Supply, lay and compaction subgrade compacted thickness 300 mm for Roads - (RD-L-12/2)-Z3-L122-RD | 5d | 2027-02-23 | 2027-02-28 | RHD4ENSDZ3APPEW100, RHD4ENSDZ3APPRD220, RHD4CZ3L122ST1506, RHD4CZ3L122TC3400, RHD4CZ3L122ICT3400 SS |  | -185d |
|  | 2020 | **RHD4-02-002-L122-(RD)-Aggregate Base Course** |  | 2027-03-01 | 2027-03-06 |  |  |  |
| RHD4CZ3L122RD2100 |  | Supply, lay and compaction Aggregate base course compacted thickness 300 mmfor Roads - (RD-L-12/2)-Z3-L122-RD | 5d | 2027-03-01 | 2027-03-06 | RHD4PRSHLDOSRD1000, RHD4PRSHLSTAGRD1000, RHD4CZ3L122RD1100 |  | -185d |
|  | 2021 | **RHD4-02-002-L122-(RD)-Bituminous base course Two Layers, including (MC1)&(RC2)** |  | 2027-03-07 | 2028-08-22 |  |  |  |
| RHD4CZ3L122RD3100 |  | Supply, lay and Asphaltic base course including Prime Coat (MC1) for 1st Layer - (RD-L-12/2)-Z3-L122-RD | 5d | 2027-03-07 | 2027-03-15 | RHD4PRSHLDOSRD1100, RHD4ENMSASPH2000, RHD4ENMSASPH2010, RHD4PRSHLSTAGRD1100, RHD4CZ3L122RD2100, RHD4CZ7A012RD3100, RHD4CZ5L016RD3100, RHD4CZ7L131RD3100 |  | -185d |

| ID | WBS | Task | Duration | Start | Finish | Predecessors | Complete | Total float |
| --- | --- | --- | --- | --- | --- | --- | --- | --- |
| RHD4CZ3L122RD3200 |  | Supply, lay and Asphaltic base course including Tack Coat (RC2) for 2nd Layer - (RD-L-12/2)-Z3-L122-RD | 5d | 2028-08-17 | 2028-08-22 | RHD4PRSHLDOSRD1100, RHD4PRSHLSTAGRD1100, RHD4PRSHLSTAGST1701, RHD4PRSHLDOSST1702, RHD4PRLOLSTAGLFS1300, RHD4PRSHLSTAGIRR1000, RHD4PRSHLSTAGSW1406, RHD4PRSHLSTAGSW1408, RHD4PRLOLSTAGLFS1500, RHD4PRSHLSTAGST1702, RHD4PRSHLSTAGSW1401, RHD4PRSHLSTAGPT1000, RHD4CZ3L122RD3100, RHD4CZ3L122CCTV6100 |  | -198d |
|  | 2023 | **RHD4-02-002-L122-(RD)-Precast Concrete Curb** |  | 2028-08-23 | 2028-08-31 |  |  |  |
| RHD4CZ3L122RD5100 |  | Supply and installation Precast Concrete Kerb for Roads - (RD-L-12/2)-Z3-L122-RD | 8d | 2028-08-23 | 2028-08-31 | RHD4PRSHLDOSRD1200, RHD4ENMSRD2000, RHD4ENMSRD2010, RHD4PRSHLSTAGRD1200, RHD4CZ3L122RD3200, RHD4GNSTZ7FT1000 |  | -198d |
|  | 2026 | **RHD4-02-002-L122-(RD)-Traffic Signage** |  | 2028-09-02 | 2028-09-09 |  |  |  |
| RHD4CZ3L122RD8100 |  | Installation of Traffic Signage for Road Network - (RD-L-12/2)-Z3-L122-RD | 7d | 2028-09-02 | 2028-09-09 | RHD4PRSHLDOSRD1600, RHD4PRSHLSTAGST1400, RHD4PRSHLSTAGRD1600, RHD4CZ3L122RD5100, RHD4CZ3L122TC2400, RHD4CZ3L122ICT2400 |  | -198d |
|  | 2024 | **RHD4-02-002-L122-(RD)-Precast Interlocking Block Pavers** |  | 2028-09-10 | 2028-10-03 |  |  |  |
| RHD4CZ3L122RD6100 |  | Interlocking block pavers for sidewalk-footpath for Side walks and Parking areas - (RD-L-12/2)-Z3-L122-RD | 20d | 2028-09-10 | 2028-10-03 | RHD4PRSHLDOSRD1300, RHD4PRSHLDOSRD1400, RHD4ENMSRD2000, RHD4ENMSRD2010, RHD4PRSHLSTAGRD1300, RHD4PRSHLSTAGRD1400, RHD4CZ3L122RD8100, RHD4GNCCTVZ8FT2000, RHD4GNICTZ1FT1900, RHD4CZ9L02RD7100 |  | -198d |
|  | 2022 | **RHD4-02-002-L122-(RD)-Bituminous concrete wearing course including tack coat (RC2)** |  | 2028-10-04 | 2028-10-12 |  |  |  |
| RHD4CZ3L122RD4100 |  | Supply, lay and compaction Asphaltic wearing course including tack Coat (RC2)for Road Network - (RD-L-12/2)-Z3-L122-RD | 8d | 2028-10-04 | 2028-10-12 | RHD4CZ3L122RD5100, RHD4CZ3L122RD6100 |  | -198d |
|  | 2025 | **RHD4-02-002-L122-(RD)-Pavement Marking** |  | 2028-10-14 | 2028-10-26 |  |  |  |
| RHD4CZ3L122RD7100 |  | Pavement Markings for Road Network - (RD-L-12/2)-Z3-L122-RD | 12d | 2028-10-14 | 2028-10-26 | RHD4PRSHLDOSRD1500, RHD4PRSHLSTAGRD1500, RHD4CZ3L122RD4100 |  | -198d |
|  | 1843 | **RHD4-02-002-Z3-L122-Storm Network - ST** |  | 2026-09-19 | 2027-06-08 |  |  |  |
|  | 3743 | **RHD4-02-002-L122-(ST)-GRP Pipes - 1100 mm diameter** |  | 2026-10-03 | 2027-01-25 |  |  |  |
| RHD4CZ3L122ST1107 |  | Excavation works for GRP Pipe Line 1100 mm - (RD-L-12 /2)-Z3-L122-ST | 2d | 2026-10-03 A | 2026-10-04 A | RHD4CZ3L122ST1501 | 100% |  |
| RHD4CZ3L122ST1207 |  | Bedding works for GRP Pipe Line 1100 mm - (RD-L-12 /2)-Z3-L122-ST | 2d | 2027-01-17 | 2027-01-18 | RHD4CZ3L122ST1107 |  | -177d |
| RHD4CZ3L122ST1307 |  | Installing for GRP Pipe Line 1100 mm - (RD-L-12 /2)-Z3-L122-ST | 2d | 2027-01-19 | 2027-01-20 | RHD4CZ3L122ST1207 |  | -177d |
| RHD4CZ3L122ST1407 |  | Primary Test for GRP Pipe Line 1100 mm - (RD-L-12 /2)-Z3-L122-ST | 2d | 2027-01-21 | 2027-01-23 | RHD4CZ3L122ST1307 |  | -177d |
| RHD4CZ3L122ST1507 |  | Backfilling and warning tape works for GRP Pipe Line 1100 mm - (RD-L-12 /2)-Z3-L122-ST | 2d | 2027-01-24 | 2027-01-25 | RHD4CZ3L122ST1407, RHD4CZ3L122ST1506 |  | -177d |
|  | 2039 | **RHD4-02-002-L122-(ST)-GRP Pipes - 1000 mm diameter** |  | 2026-10-01 | 2027-01-10 |  |  |  |
| RHD4CZ3L122ST1106 |  | Excavation works for GRP Pipe Line 1000 mm - (RD-L-12 /2)-Z3-L122-ST | 2d | 2026-10-01 A | 2026-10-03 A | RHD4CZ3L122ST3102 | 100% |  |
| RHD4CZ3L122ST1206 |  | Bedding works for GRP Pipe Line 1000 mm - (RD-L-12 /2)-Z3-L122-ST | 2d | 2026-10-17 A | 2027-01-03 | RHD4CZ3L122ST1106 |  | -166d |
| RHD4CZ3L122ST1306 |  | Installing for GRP Pipe Line 1000 mm - (RD-L-12 /2)-Z3-L122-ST | 2d | 2026-10-19 A | 2027-01-05 | RHD4CZ3L122ST1206 | 100% | -166d |
| RHD4CZ3L122ST1406 |  | Primary Test for GRP Pipe Line 1000 mm - (RD-L-12 /2)-Z3-L122-ST | 2d | 2027-01-06 | 2027-01-07 | RHD4CZ3L122ST1306 |  | -166d |
| RHD4CZ3L122ST1506 |  | Backfilling and warning tape works for GRP Pipe Line 1000 mm - (RD-L-12 /2)-Z3-L122-ST | 2d | 2027-01-09 | 2027-01-10 | RHD4CZ3L122ST1406 |  | -166d |
|  | 5252 | **RHD4-02-002-L122-(ST)-GRP Pipes - 700 mm diameter** |  | 2026-10-01 | 2027-01-13 |  |  |  |
| RHD4CZ3L122ST1103 |  | Excavation works for GRP Pipe Line 700 mm - (RD-L-12 /2)-Z3-L122-ST | 2d | 2026-10-01 A | 2027-01-04 | RHD4CZ3L122ST1106 | 38% | -177d |
| RHD4CZ3L122ST1203 |  | Bedding works for GRP Pipe Line 700 mm - (RD-L-12 /2)-Z3-L122-ST | 2d | 2026-10-19 A | 2027-01-06 | RHD4CZ3L122ST1103 | 20% | -177d |
| RHD4CZ3L122ST1303 |  | Installing for GRP Pipe Line 700 mm - (RD-L-12 /2)-Z3-L122-ST | 2d | 2026-10-20 A | 2027-01-09 | RHD4CZ3L122ST1203 | 19% | -177d |
| RHD4CZ3L122ST1403 |  | Primary Test for GRP Pipe Line 700 mm - (RD-L-12 /2)-Z3-L122-ST | 2d | 2027-01-10 | 2027-01-11 | RHD4CZ3L122ST1303 |  | -177d |
| RHD4CZ3L122ST1503 |  | Backfilling and warning tape works for GRP Pipe Line 700 mm - (RD-L-12 /2)-Z3-L122-ST | 2d | 2027-01-12 | 2027-01-13 | RHD4CZ3L122ST1403 |  | -177d |
|  | 5250 | **RHD4-02-002-L122-(ST)-GRP Pipes - 500 mm diameter** |  | 2026-10-17 | 2027-01-16 |  |  |  |
| RHD4CZ3L122ST1101 |  | Excavation works for GRP Pipe Line 500 mm - (RD-L-12 /2)-Z3-L122-ST | 2d | 2026-10-17 A | 2027-01-06 | RHD4CZ3L122ST1103 | 57% | -177d |
| RHD4CZ3L122ST1201 |  | Bedding works for GRP Pipe Line 500 mm - (RD-L-12 /2)-Z3-L122-ST | 2d | 2027-01-07 | 2027-01-09 | RHD4CZ3L122ST1101 |  | -177d |
| RHD4CZ3L122ST1301 |  | Installing for GRP Pipe Line 500 mm - (RD-L-12 /2)-Z3-L122-ST | 2d | 2027-01-10 | 2027-01-11 | RHD4CZ3L122ST1201 |  | -177d |
| RHD4CZ3L122ST1401 |  | Primary Test for GRP Pipe Line 500 mm - (RD-L-12 /2)-Z3-L122-ST | 2d | 2027-01-12 | 2027-01-13 | RHD4CZ3L122ST1301 |  | -177d |
| RHD4CZ3L122ST1501 |  | Backfilling and warning tape works for GRP Pipe Line 500 mm - (RD-L-12 /2)-Z3-L122-ST | 2d | 2027-01-14 | 2027-01-16 | RHD4CZ3L122ST1401, RHD4CZ3L122ST1503 |  | -177d |
|  | 1862 | **RHD4-02-002-L122-(ST)-MH Works - 2000 mm diameter** |  | 2026-10-17 | 2027-02-25 |  |  |  |
| RHD4CZ3L122ST3102 |  | Excavation and PC Blinding works for MH 2000 mm - (RD-L-12/2)-Z3-L122-ST | 2d | 2026-10-17 A | 2026-10-18 A | RHD4ENSDZ3APPST110, RHD4ENMSST2000, RHD4PRSHLDOSST1301 | 100% |  |
| RHD4CZ3L122ST3202 |  | Installation of Base for MH 2000 mm - (RD-L-12/2)-Z3-L122-ST | 3d | 2027-02-10 | 2027-02-14 | RHD4PRSHLSTAGST1602, RHD4CZ3L122ST3102, RHD4CZ5L016ST7500 |  | -154.02d |
| RHD4CZ3L122ST3302 |  | MH Ring and C.Slab works and Backfilling works for MH 2000 mm - (RD-L-12/2)-Z3-L122-ST | 5d | 2027-02-14 | 2027-02-20 | RHD4PRSHLDOSST1602, RHD4CZ3L122ST3202 |  | -154.02d |
| RHD4CZ3L122ST3402 |  | Steel Cover for MH 2000 mm - (RD-L-12/2)-Z3-L122-ST | 2d | 2027-02-20 | 2027-02-23 | RHD4PRSHLDOSST1702, RHD4PRSHLSTAGST1702, RHD4CZ3L122ST3302, RHD4CZ3L122ST1500 |  | -154.02d |
| RHD4CZ3L122ST3502 |  | Finishing, Benching, Testing works for MH 2000 mm - (RD-L-12/2)-Z3-L122-ST | 2d | 2027-02-23 | 2027-02-25 | RHD4CZ3L122ST3402 |  | -154.02d |
|  | 1861 | **RHD4-02-002-L122-(ST)-MH Works - 1500 mm diameter** |  | 2026-10-01 | 2027-06-05 |  |  |  |
| RHD4CZ3L122ST3101 |  | Excavation and PC Blinding works for MH 1500 mm - (RD-L-12/2)-Z3-L122-ST | 5d | 2026-10-01 A | 2027-04-20 | RHD4ENSDZ3APPST110, RHD4ENMSST2000, RHD4CZ3L122ST3102 SS, RHD4CZ5L016SW3501, RHD4CZ3C011RD3100 | 78% | -177d |
| RHD4CZ3L122ST3201 |  | Installation of Base for MH 1500 mm - (RD-L-12/2)-Z3-L122-ST | 5d | 2027-04-24 | 2027-04-28 | RHD4PRSHLSTAGST1602, RHD4CZ3L122ST3101, RHD4CZ3L122ST3202, RHD4CZ5L016SW3000 |  | -179d |
| RHD4CZ3L122ST3301 |  | MH Ring and C.Slab works and Backfilling works for MH 1500 mm - (RD-L-12/2)-Z3-L122-ST | 5d | 2027-04-29 | 2027-05-04 | RHD4PRSHLDOSST1602, RHD4CZ3L122ST3201, RHD4CZ3L122ST3302, RHD4CTUN1Z5STG21170 |  | -179d |
| RHD4CZ3L122ST3401 |  | Steel Cover for MH 1500 mm - (RD-L-12/2)-Z3-L122-ST | 3d | 2027-05-05 | 2027-05-08 | RHD4PRSHLDOSST1702, RHD4PRSHLSTAGST1702, RHD4CZ3L122ST3301, RHD4CZ3L122ST1500, RHD4CZ3L122ST3402 |  | -158d |
| RHD4CZ3L122ST3501 |  | Finishing, Benching, Testing works for MH 1500 mm - (RD-L-12/2)-Z3-L122-ST | 5d | 2027-05-31 | 2027-06-05 | RHD4CZ3L122ST3401, RHD4CZ3L122ST2500, RHD4CZ3L122ST3502 |  | -173d |
|  | 1860 | **RHD4-02-002-L122-(ST)-MH Works - 1200 mm diameter** |  | 2026-10-07 | 2027-06-08 |  |  |  |
| RHD4CZ3L122ST3100 |  | Excavation and PC Blinding works for MH 1200 mm - (RD-L-12/2)-Z3-L122-ST | 5d | 2026-10-07 A | 2027-04-26 | RHD4ENSDZ3APPST110, RHD4ENMSST2000, RHD4ENMSST2010, RHD4CZ3L122ST3101 | 74% | -171d |
| RHD4CZ3L122ST3200 |  | Installation of Base for MH 1200 mm - (RD-L-12/2)-Z3-L122-ST | 5d | 2027-04-29 | 2027-05-04 | RHD4PRSHLSTAGST1602, RHD4CZ3L122ST3100, RHD4CZ3L122ST3201 |  | -173d |
| RHD4CZ3L122ST3300 |  | MH Ring and C.Slab works and Backfilling works for MH 1200 mm - (RD-L-12/2)-Z3-L122-ST | 3d | 2027-05-05 | 2027-05-08 | RHD4PRSHLDOSST1602, RHD4CZ3L122ST3200, RHD4CZ3L122ST3301 |  | -173d |
| RHD4CZ3L122ST3400 |  | Steel Cover for MH 1200 mm - (RD-L-12/2)-Z3-L122-ST | 3d | 2027-05-31 | 2027-06-02 | RHD4PRSHLDOSST1702, RHD4PRSHLSTAGST1702, RHD4CZ3L122ST3300, RHD4CZ3L122ST2500, RHD4CZ3L122ST1500, RHD4CZ3L122ST3401 |  | -171d |
| RHD4CZ3L122ST3500 |  | Finishing, Benching, Testing works for MH 1200 mm - (RD-L-12/2)-Z3-L122-ST | 3d | 2027-06-06 | 2027-06-08 | RHD4CZ3L122ST3400, RHD4CZ3L122ST3501 |  | -173d |
|  | 1852 | **RHD4-02-002-L122-(ST)-GRP Pipes - 1200 mm diameter** |  |  |  |  |  |  |
|  | 1849 | **RHD4-02-002-L122-(ST)-GRP Pipes - 900 mm diameter** |  |  |  |  |  |  |
|  | 1848 | **RHD4-02-002-L122-(ST)-GRP Pipes - 800 mm diameter** |  | 2026-09-29 | 2027-01-21 |  |  |  |
| RHD4CZ3L122ST1104 |  | Excavation works for GRP Pipe Line 800 mm - (RD-L-12/2)-Z3-L122-ST | 2d | 2026-09-29 A | 2027-01-12 | RHD4ENSDZ3APPST110, RHD4CZ3L122ST1506 | 25% | -133d |
| RHD4CZ3L122ST1204 |  | Bedding works for GRP Pipe Line 800 mm - (RD-L-12/2)-Z3-L122-ST | 2d | 2027-01-13 | 2027-01-14 | RHD4CZ3L122ST1104 |  | -133d |
| RHD4CZ3L122ST1304 |  | Installing for GRP Pipe Line 800 mm - (RD-L-12/2)-Z3-L122-ST | 2d | 2027-01-16 | 2027-01-17 | RHD4PRSHLSTAGST1002, RHD4CZ3L122ST1204, RHD4PRSHLDOSST1602, RHD4PRSHLPOST1000, RHD4PRSHLDOSST1008 SS, RHD4PRSHLDOSST1608, RHD4PRSHLDOSST1008, RHD4PRSHLDOSST1604, RHD4PRSHLDOSST1004 |  | -133d |
| RHD4CZ3L122ST1404 |  | Primary Test for GRP Pipe Line 800 mm - (RD-L-12/2)-Z3-L122-ST | 2d | 2027-01-18 | 2027-01-19 | RHD4CZ3L122ST1304 |  | -132d |
| RHD4CZ3L122ST1504 |  | Backfilling and warning tape works for GRP Pipe Line 800 mm - (RD-L-12/2)-Z3-L122-ST | 2d | 2027-01-20 | 2027-01-21 | RHD4CZ3L122ST1404 |  | -132d |
|  | 1844 | **RHD4-02-002-L122-(ST)-GRP Pipes - 400 mm diameter** |  | 2026-09-19 | 2027-01-25 |  |  |  |
| RHD4CZ3L122ST1100 |  | Excavation works for GRP Pipe Line 400 mm - (RD-L-12/2)-Z3-L122-ST | 2d | 2026-09-19 A | 2027-01-14 | RHD4ENSDZ3APPST110, RHD4CZ3L122ST1104 | 71% | -133d |
| RHD4CZ3L122ST1200 |  | Bedding works for GRP Pipe Line 400 mm - (RD-L-12/2)-Z3-L122-ST | 2d | 2026-10-03 A | 2027-01-17 | RHD4CZ3L122ST1100, RHD4CZ3L122ST1204 | 80% | -133d |
| RHD4CZ3L122ST1300 |  | Installing for GRP Pipe Line 400 mm - (RD-L-12/2)-Z3-L122-ST | 3d | 2026-10-06 A | 2027-01-20 | RHD4PRSHLSTAGST1002, RHD4CZ3L122ST1200, RHD4CZ3L122ST1304, RHD4PRSHLDOSST1602, RHD4PRSHLPOST1000, RHD4PRSHLDOSST1008 SS, RHD4PRSHLDOSST1608, RHD4PRSHLDOSST1008, RHD4PRSHLDOSST1604, RHD4PRSHLDOSST1004 | 78% | -133d |
| RHD4CZ3L122ST1400 |  | Primary Test for GRP Pipe Line 400 mm - (RD-L-12/2)-Z3-L122-ST | 2d | 2027-01-21 | 2027-01-23 | RHD4CZ3L122ST1300, RHD4CZ3L122ST1404 |  | -133d |
| RHD4CZ3L122ST1500 |  | Backfilling and warning tape works for GRP Pipe Line 400 mm - (RD-L-12/2)-Z3-L122-ST | 2d | 2027-01-24 | 2027-01-25 | RHD4CZ3L122ST1400, RHD4CZ3L122ST1504 |  | -133d |
|  | 1859 | **RHD4-02-002-L122-(ST)-UPVC Pipes - 400 mm diameter** |  |  |  |  |  |  |
|  | 1858 | **RHD4-02-002-L122-(ST)-UPVC Pipes - 300 mm diameter** |  | 2026-09-19 | 2027-05-30 |  |  |  |

| ID | WBS | Task | Duration | Start | Finish | Predecessors | Complete | Total float |
| --- | --- | --- | --- | --- | --- | --- | --- | --- |
| RHD4CZ3L122ST2100 |  | Excavation works for UPVC Pipe Line 300 mm - (RD-L-12/2)-Z3-L122-ST | 3d | 2026-09-19 A | 2027-05-11 | RHD4ENSDZ3APPST110, RHD4CZ3L122ST3300, RHD4CZ3L122ST3301 | 85% | -173d |
| RHD4CZ3L122ST2200 |  | Bedding works for UPVC Pipe Line 300 mm - (RD-L-12/2)-Z3-L122-ST | 3d | 2026-10-17 A | 2027-05-19 | RHD4CZ3L122ST2100 | 30% | -173d |
| RHD4CZ3L122ST2300 |  | Installing for UPVC Pipe Line 300 mm - (RD-L-12/2)-Z3-L122-ST | 3d | 2026-10-19 A | 2027-05-23 | RHD4PRSHLDOSST1102, RHD4PRSHLSTAGST1102, RHD4PRSHLSTAGSW1007, RHD4CZ3L122ST2200 | 29% | -173d |
| RHD4CZ3L122ST2400 |  | Primary Test for UPVC Pipe Line 300 mm - (RD-L-12/2)-Z3-L122-ST | 2d | 2027-05-24 | 2027-05-25 | RHD4CZ3L122ST2300 |  | -173d |
| RHD4CZ3L122ST2500 |  | Backfilling and warning tape works for UPVC Pipe Line 300 mm - (RD-L-12/2)-Z3-L122-ST | 4d | 2027-05-26 | 2027-05-30 | RHD4CZ3L122ST2400, RHD4CZ3L122ST6100 |  | -173d |
|  | 1866 | **RHD4-02-002-L122-(ST)-Concrete Encasement** |  | 2027-05-20 | 2027-05-25 |  |  |  |
| RHD4CZ3L122ST6100 |  | Pipe Encasement for Storm Pipelines - (RD-L-12/2)-Z3-L122-ST | 5d | 2027-05-20 | 2027-05-25 | RHD4CZ3L122ST2300 SS, RHD4CZ3L122ST2300 FF, RHD4CZ3L122ST2200 |  | -173d |
|  | 1867 | **RHD4-02-002-Z3-L122-Catch Basin - ST** |  | 2026-09-19 | 2027-06-30 |  |  |  |
|  | 1868 | **RHD4-02-002-L122-(ST)-Single Catch Basin Works** |  | 2026-09-19 | 2027-06-19 |  |  |  |
| RHD4CZ3L122ST7100 |  | Excavation works for Single Catch Basin - (RD-L-12/2)-Z3-L122-ST | 3d | 2026-09-19 A | 2027-05-01 | RHD4ENSDZ3APPST110, RHD4CZ3L122ST3301 SS | 80% | -179d |
| RHD4CZ3L122ST7200 |  | PC Blinding, Installation and Pipe connection for Single Catch Basin - (RD-L-12/2)-Z3-L122-ST | 5d | 2027-05-02 | 2027-05-06 | RHD4CZ3L122ST7100, RHD4CZ2C082ST3501, RHD4CZ9C071ST1501, RHD4CZ2C082SW3500 |  | -179d |
| RHD4CZ3L122ST7300 |  | Rings & C.Slab & Final Backfill for Single Catch Basin - (RD-L-12/2)-Z3-L122-ST | 6d | 2027-05-08 | 2027-05-13 | RHD4PRSHLDOSST1302, RHD4PRSHLSTAGST1302, RHD4CZ3L122ST7200 |  | -179d |
| RHD4CZ3L122ST7400 |  | Steel Cover for Single Catch Basin - (RD-L-12/2)-Z3-L122-ST | 5d | 2027-05-19 | 2027-05-24 | RHD4PRSHLDOSST1702, RHD4CZ3L122ST7300 |  | -160d |
| RHD4CZ3L122ST7500 |  | Finishing and Insulation works for Single Catch Basin - (RD-L-12/2)-Z3-L122-ST | 9d | 2027-06-09 | 2027-06-19 | RHD4CZ3L122ST7400, RHD4CZ3L122ST3500 |  | -173d |
|  | 1869 | **RHD4-02-002-L122-(ST)-Double Catch Basin Works** |  | 2027-06-20 | 2027-06-30 |  |  |  |
| RHD4CZ3L122ST8100 |  | Excavation works for Double Catch Basin - (RD-L-12/2)-Z3-L122-ST | 2d | 2027-06-20 | 2027-06-21 | RHD4ENSDZ3APPST110, RHD4CZ3L122ST3300, RHD4CZ3L122ST3301, RHD4CZ3L122ST7500 |  | -173d |
| RHD4CZ3L122ST8200 |  | PC Blinding, Installation and Pipe connection for Double Catch Basin - (RD-L-12/2)-Z3-L122-ST | 2d | 2027-06-22 | 2027-06-23 | RHD4CZ3L122ST8100 |  | -173d |
| RHD4CZ3L122ST8300 |  | Rings & C.Slab & Final Backfillfor Double Catch Basin - (RD-L-12/2)-Z3-L122-ST | 2d | 2027-06-24 | 2027-06-26 | RHD4PRSHLDOSST1302, RHD4PRSHLSTAGST1302, RHD4CZ3L122ST8200, RHD4CZ3L122ST7300 |  | -173d |
| RHD4CZ3L122ST8400 |  | Steel Cover for Double Catch Basin - (RD-L-12/2)-Z3-L122-ST | 2d | 2027-06-27 | 2027-06-28 | RHD4PRSHLDOSST1702, RHD4CZ3L122ST8300, RHD4CZ3L122ST7400 |  | -173d |
| RHD4CZ3L122ST8500 |  | Finishing and Insulation works for Double Catch Basin - (RD-L-12/2)-Z3-L122-ST | 2d | 2027-06-29 | 2027-06-30 | RHD4CZ3L122ST8400, RHD4CZ3L122ST7500 |  | -173d |
|  | 4299 | **RHD4-02-002-Z3-L122-Concrete Box Culvert - ST** |  | 2026-08-04 | 2027-07-18 |  |  |  |
|  | 4300 | **RHD4-02-002-L122-(ST)-Concrete Box Culvert** |  | 2026-08-04 | 2027-07-18 |  |  |  |
| RHD4CZ3L122ST4100 |  | Excavation works for Box Culvert - (RD-L-12/2)-Z3-L122-ST | 12d | 2026-08-04 A | 2026-08-08 A | RHD4CZ3L122ST8500, RHD4ENSDZ3APPST110 | 100% |  |
| RHD4CZ3L122ST4200 |  | PC works for Box Culvert - (RD-L-12/2)-Z3-L122-ST | 6d | 2026-08-06 A | 2026-08-08 A | RHD4CZ3L122ST4100 SS | 100% |  |
| RHD4CZ3L122ST4400 |  | Raft works for Box Culvert - (RD-L-12/2)-Z3-L122-ST | 5d | 2026-08-09 A | 2026-08-12 A | RHD4CZ3L122ST4200 SS | 100% |  |
| RHD4CZ3L122ST4500 |  | Wall and slab works for Box Culvert - (RD-L-12/2)-Z3-L122-ST | 5d | 2026-08-13 A | 2026-09-23 A | RHD4CZ3L122ST4400 | 100% |  |
| RHD4CZ3L122ST4600 |  | Insulation and Testing for Box Culvert - (RD-L-12/2)-Z3-L122-ST | 4d | 2026-09-24 A | 2026-09-28 A | RHD4CZ3L122ST4700, RHD4CZ3L122ST5400, RHD4CZ3L122ST1503 | 100% |  |
| RHD4CZ3L122ST4700 |  | Backfilling works for Box Culvert - (RD-L-12/2)-Z3-L122-ST | 9d | 2027-07-08 | 2027-07-18 | RHD4CZ3L122ST4500, RHD4CZ3L122ST5300 |  | -156d |
|  | 4301 | **RHD4-02-002-L122-(ST)-Concrete Chambers** |  | 2026-09-30 | 2027-07-10 |  |  |  |
| RHD4CZ3L122ST5100 |  | Excavation and Bedding for Concrete Chambers - for Box Culvert - (RD-L-12/2)-Z3-L122-ST | 2d | 2026-09-30 A | 2027-07-03 | RHD4CZ3L122ST4500 |  | -156d |
| RHD4CZ3L122ST5200 |  | PC works for Concrete Chambers - for Box Culvert - (RD-L-12/2)-Z3-L122-ST | 2d | 2026-10-03 A | 2027-07-05 | RHD4CZ3L122ST5100 |  | -156d |
| RHD4CZ3L122ST5300 |  | Installation for Concrete Chambers - for Box Culvert - (RD-L-12/2)-Z3-L122-ST | 2d | 2026-10-05 A | 2027-07-07 | RHD4CZ3L122ST5200 |  | -156d |
| RHD4CZ3L122ST5400 |  | Backfilling works for Concrete Chambers - for Box Culvert - (RD-L-12/2)-Z3-L122-ST | 2d | 2027-07-08 | 2027-07-10 | RHD4CZ3L122ST5300 |  | -150d |
|  | 1892 | **RHD4-02-002-Z3-L122-Sewage Network - SW** |  | 2026-10-20 | 2027-07-20 |  |  |  |
|  | 577 | **RHD4-02-002-L122-(SW)-MH Works - 1200 mm diameter** |  | 2026-10-20 | 2027-07-20 |  |  |  |
| RHD4CZ3L122SW3100 |  | Excavation and PC Blinding works for MH 1200 mm - (RD-L-12 /2)-Z3-L122-SW | 2d | 2026-10-20 A | 2026-10-21 A | RHD4CZ3L122ST2500, RHD4CZ3L122ST1500, RHD4CZ3L122ST8500 | 100% |  |
| RHD4CZ3L122SW3200 |  | Installation of Base for MH 1200 mm - (RD-L-12 /2)-Z3-L122-SW | 2d | 2027-07-01 | 2027-07-03 | RHD4CZ3L122SW3100 |  | -147d |
| RHD4CZ3L122SW3300 |  | MH Ring and C.Slab works and Backfilling works for MH 1200 mm - (RD-L-12 /2)-Z3-L122-SW | 2d | 2027-07-04 | 2027-07-05 | RHD4CZ3L122SW3200 |  | -147d |
| RHD4CZ3L122SW3400 |  | Steel Cover for MH 1200 mm - (RD-L-12 /2)-Z3-L122-SW | 2d | 2027-07-06 | 2027-07-07 | RHD4CZ3L122SW3300 |  | -147d |
| RHD4CZ3L122SW3500 |  | Finishing, Benching, Testing works for MH 1200 mm - (RD-L-12 /2)-Z3-L122-SW | 2d | 2027-07-19 | 2027-07-20 | RHD4CZ3L122SW3400, RHD4CZ3L122ST4600 |  | -156d |
|  | 1895 | **RHD4-02-002-L122-(SW)-GRP Pipes - 500 mm diameter** |  |  |  |  |  |  |
|  | 573 | **RHD4-02-002-L122-(SW)-UPVC Pipes - 200 mm diameter** |  | 2026-10-27 | 2027-07-10 |  |  |  |
| RHD4CZ3L122SW2100 |  | Excavation works for UPVC Pipe Line 200 mm - (RD-L-12 /2)-Z3-L122-SW | 2d | 2026-10-27 A | 2026-10-28 A | RHD4CZ3L122SW3100 | 100% |  |
| RHD4CZ3L122SW2200 |  | Bedding works for UPVC Pipe Line 200 mm - (RD-L-12 /2)-Z3-L122-SW | 2d | 2027-07-01 | 2027-07-03 | RHD4CZ3L122SW2100 |  | -158d |
| RHD4CZ3L122SW2300 |  | Installing for UPVC Pipe Line 200 mm - (RD-L-12 /2)-Z3-L122-SW | 2d | 2027-07-04 | 2027-07-05 | RHD4CZ3L122SW2200 |  | -158d |
| RHD4CZ3L122SW2400 |  | Primary Test for UPVC Pipe Line 200 mm - (RD-L-12 /2)-Z3-L122-SW | 2d | 2027-07-06 | 2027-07-07 | RHD4CZ3L122SW2300 |  | -158d |
| RHD4CZ3L122SW2500 |  | Backfilling and warning tape works for UPVC Pipe Line 200 mm - (RD-L-12 /2)-Z3-L122-SW | 2d | 2027-07-08 | 2027-07-10 | RHD4CZ3L122SW2400, RHD4CZ5L016IRR3200 |  | -158d |
|  | 1894 | **RHD4-02-002-L122-(SW)-GRP Pipes - 400 mm diameter** |  |  |  |  |  |  |
|  | 1893 | **RHD4-02-002-L122-(SW)-GRP Pipes - 300 mm diameter** |  |  |  |  |  |  |
|  | 1900 | **RHD4-02-002-L122-(SW)-HDPE Pipes - 400 mm diameter** |  |  |  |  |  |  |
|  | 1901 | **RHD4-02-002-L122-(SW)-Concrete Encasement** |  |  |  |  |  |  |
|  | 1929 | **RHD4-02-002-Z3-L122-Potable Network - PT** |  | 2027-07-11 | 2027-09-14 |  |  |  |
|  | 1933 | **RHD4-02-002-L122-(PT)-HDPE Pipes - 400 mm diameter** |  | 2027-07-11 | 2027-08-24 |  |  |  |
| RHD4CZ3L122PT1103 |  | Excavation works for HDPE Pipline 400 mm - (RD-L-12/2)-Z3-L122-PT | 8d | 2027-07-11 | 2027-07-19 | RHD4ENSDZ3APPPT130, RHD4ENMSPT2000, RHD4CZ3L122SW2500 |  | -158d |
| RHD4CZ3L122PT1203 |  | Bedding works for HDPE Pipline 400 mm - (RD-L-12/2)-Z3-L122-PT | 7d | 2027-07-20 | 2027-07-27 | RHD4CZ3L122PT1103 |  | -158d |
| RHD4CZ3L122PT1303 |  | Installing for HDPE Pipline 400 mm - (RD-L-12/2)-Z3-L122-PT | 11d | 2027-07-28 | 2027-08-09 | RHD4PRSHLDOSPT1000, RHD4PRSHLSTAGPT1000, RHD4CZ3L122PT1203 |  | -158d |
| RHD4CZ3L122PT1403 |  | Primary Test for HDPE Pipline 400 mm - (RD-L-12/2)-Z3-L122-PT | 5d | 2027-08-10 | 2027-08-15 | RHD4CZ3L122PT1303 |  | -158d |
| RHD4CZ3L122PT1503 |  | Backfilling and warning tape works for HDPE Pipline 400 mm - (RD-L-12/2)-Z3-L122-PT | 8d | 2027-08-16 | 2027-08-24 | RHD4CZ3L122PT1403 |  | -158d |
|  | 1747 | **RHD4-02-002-L122-(PT)-Butterfly Valve Chamber** |  | 2027-07-20 | 2027-07-28 |  |  |  |
| RHD4CZ3L122PT2100 |  | Excavation and Bedding for Butterfly Valve Chamber for Potable Water Network - (RD-L-12/2)-Z3-L122-PT | 2d | 2027-07-20 | 2027-07-21 | RHD4CZ3L122PT1103 |  | -146d |
| RHD4CZ3L122PT2200 |  | PC works for Butterfly Valve Chamber for Potable Water Network - (RD-L-12/2)-Z3-L122-PT | 2d | 2027-07-22 | 2027-07-24 | RHD4CZ3L122PT2100 |  | -146d |
| RHD4CZ3L122PT2300 |  | Installation for Butterfly Valve Chamber for Potable Water Network - (RD-L-12/2)-Z3-L122-PT | 2d | 2027-07-25 | 2027-07-26 | RHD4CZ3L122PT2200 |  | -146d |
| RHD4CZ3L122PT2400 |  | Backfilling works for Butterfly Valve Chamber for Potable Water Network - (RD-L-12/2)-Z3-L122-PT | 2d | 2027-07-27 | 2027-07-28 | RHD4CZ3L122PT2300 |  | -146d |
|  | 1748 | **RHD4-02-002-L122-(PT)-Butterfly Valves** |  | 2027-07-27 | 2027-07-31 |  |  |  |
| RHD4CZ3L122PT3101 |  | Installation for Butterfly Valves for Potable Water Network - (RD-L-12/2)-Z3-L122-PT | 2d | 2027-07-27 | 2027-07-28 | RHD4CZ3L122PT2300 |  | -146d |
| RHD4CZ3L122PT3201 |  | Stem and Service box for Butterfly Valves for Potable Water Network - (RD-L-12/2)-Z3-L122-PT | 2d | 2027-07-29 | 2027-07-31 | RHD4CZ3L122PT3101, RHD4CZ3L122PT2400 |  | -146d |
|  | 1939 | **RHD4-02-002-L122-(PT)-Wash out Valves** |  | 2027-09-08 | 2027-09-14 |  |  |  |
| RHD4CZ3L122PT3102 |  | Installation for Wash out Valves for Potable Water Network - (RD-L-12/2)-Z3-L122-PT | 2d | 2027-09-08 | 2027-09-09 | RHD4PRSHLDOSPT1200, RHD4PRSHLSTAGPT1200, RHD4CZ3L122PT2301 |  | -156d |
| RHD4CZ3L122PT3202 |  | Stem and Service box for Wash out Valves for Potable Water Network - (RD-L-12/2)-Z3-L122-PT | 2d | 2027-09-13 | 2027-09-14 | RHD4PRSHLDOSPT1300, RHD4PRSHLSTAGPT1300, RHD4CZ3L122PT3102, RHD4CZ3L122PT2401 |  | -158d |
|  | 1940 | **RHD4-02-002-L122-(PT)-Air Valve Chambers** |  | 2027-07-20 | 2027-07-28 |  |  |  |

| ID | WBS | Task | Duration | Start | Finish | Predecessors | Total float |
| --- | --- | --- | --- | --- | --- | --- | --- |
| RHD4CZ3L122PT2102 |  | Excavation and Bedding for Air Valve Chambers for Potable Water Network - (RD-L-12/2)-Z3-L122-PT | 2d | 2027-07-20 | 2027-07-21 | RHD4ENSDZ3APPPT130, RHD4CZ3L122PT1103 | -121d |
| RHD4CZ3L122PT2202 |  | PC works for Air Valve Chambers for Potable Water Network - (RD-L-12/2)-Z3-L122-PT | 2d | 2027-07-22 | 2027-07-24 | RHD4CZ3L122PT2102 | -121d |
| RHD4CZ3L122PT2302 |  | Installation for Air Valve Chambers for Potable Water Network - (RD-L-12/2)-Z3-L122-PT | 2d | 2027-07-25 | 2027-07-26 | RHD4PRSHLDOSPT1100, RHD4PRSHLDOSPT1400, RHD4PRSHLSTAGPT1100, RHD4PRSHLSTAGPT1400, RHD4CZ3L122PT2202 | -121d |
| RHD4CZ3L122PT2402 |  | Backfilling works for Air Valve Chambers for Potable Water Network - (RD-L-12/2)-Z3-L122-PT | 2d | 2027-07-27 | 2027-07-28 | RHD4CZ3L122PT2302 | -121d |
|  | 1941 | **RHD4-02-002-L122-(PT)-Air Valves** |  | 2027-07-27 | 2027-07-31 |  |  |
| RHD4CZ3L122PT3103 |  | Installation for Air Valves for Potable Water Network - (RD-L-12/2)-Z3-L122-PT | 2d | 2027-07-27 | 2027-07-28 | RHD4PRSHLDOSPT1200, RHD4PRSHLSTAGPT1200, RHD4CZ3L122PT2302 | -121d |
| RHD4CZ3L122PT3203 |  | Stem and Service box for Air Valves for Potable Water Network - (RD-L-12/2)-Z3-L122-PT | 2d | 2027-07-29 | 2027-07-31 | RHD4PRSHLDOSPT1300, RHD4PRSHLSTAGPT1300, RHD4CZ3L122PT3103, RHD4CZ3L122PT2402 | -121d |
|  | 1942 | **RHD4-02-002-L122-(PT)-Fire Hydrant** |  | 2027-08-25 | 2027-09-05 |  |  |
| RHD4CZ3L122PT4100 |  | Excavation and Bedding and Pipe Installation for Fire Hydrant - (RD-L-12/2)-Z3-L122-PT | 2d | 2027-08-25 | 2027-08-26 | RHD4ENSDZ3APPPT130, RHD4CZ3L122PT1503 | -150d |
| RHD4CZ3L122PT4200 |  | Valve Installation for Fire Hydrant - (RD-L-12/2)-Z3-L122-PT | 2d | 2027-08-28 | 2027-08-29 | RHD4CZ3L122PT4100 | -150d |
| RHD4CZ3L122PT4300 |  | Stem for Fire Hydrant - (RD-L-12/2)-Z3-L122-PT | 2d | 2027-08-30 | 2027-08-31 | RHD4CZ3L122PT4200 | -150d |
| RHD4CZ3L122PT4400 |  | Fire Installation for Fire Hydrant - (RD-L-12/2)-Z3-L122-PT | 2d | 2027-09-01 | 2027-09-02 | RHD4PRSHLDOSPT1500, RHD4PRSHLSTAGPT1500, RHD4CZ3L122PT4300 | -150d |
| RHD4CZ3L122PT4500 |  | Protection Barriers for Fire Hydrant - (RD-L-12/2)-Z3-L122-PT | 2d | 2027-09-04 | 2027-09-05 | RHD4CZ3L122PT4400, RHD4CZ3L122PT3203 | -150d |
|  | 1943 | **RHD4-02-002-L122-(PT)-Concrete Encasement** |  |  |  |  |  |
|  | 1938 | **RHD4-02-002-L122-(PT)-Wash out Valve Chambers** |  | 2027-08-25 | 2027-09-12 |  |  |
| RHD4CZ3L122PT2101 |  | Excavation and Bedding for Wash out Valve Chambers for Potable Water Network - (RD-L-12/2)-Z3-L122-PT | 4d | 2027-08-25 | 2027-08-29 | RHD4ENSDZ3APPPT130, RHD4CZ3L122PT1503 | -158d |
| RHD4CZ3L122PT2201 |  | PC works for Wash out Valve Chambers for Potable Water Network - (RD-L-12/2)-Z3-L122-PT | 4d | 2027-08-30 | 2027-09-02 | RHD4CZ3L122PT2101 | -158d |
| RHD4CZ3L122PT2301 |  | Installation for Wash out Valve Chambers for Potable Water Network - (RD-L-12/2)-Z3-L122-PT | 4d | 2027-09-04 | 2027-09-07 | RHD4PRSHLDOSPT1100, RHD4PRSHLDOSPT1400, RHD4PRSHLSTAGPT1100, RHD4PRSHLSTAGPT1400, RHD4CZ3L122PT2201 | -158d |
| RHD4CZ3L122PT2401 |  | Backfilling works for Wash out Valve Chambers for Potable Water Network - (RD-L-12/2)-Z3-L122-PT | 4d | 2027-09-08 | 2027-09-12 | RHD4CZ3L122PT2301 | -158d |
|  | 1944 | **RHD4-02-002-Z3-L122-Irrigation Network - IRR** |  | 2027-07-20 | 2027-10-03 |  |  |
|  | 1951 | **RHD4-02-002-L122-(IRR)-HDPE Pipes - 450 mm diameter** |  |  |  |  |  |
|  | 1950 | **RHD4-02-002-L122-(IRR)-HDPE Pipes - 400 mm diameter** |  |  |  |  |  |
|  | 1949 | **RHD4-02-002-L122-(IRR)-HDPE Pipes - 315 mm diameter** |  | 2027-08-16 | 2027-10-03 |  |  |
| RHD4CZ3L122IRR1104 |  | Excavation works for HDPE Pipline 315 mm - (RD-L-12/2)-Z3-L122-IRR | 10d | 2027-08-16 | 2027-08-26 | RHD4ENSDZ3APPIRR140, RHD4ENMSRR2000, RHD4CZ3L122PT1403 | -157d |
| RHD4CZ3L122IRR1204 |  | Bedding works for HDPE Pipline 315 mm - (RD-L-12/2)-Z3-L122-IRR | 8d | 2027-08-28 | 2027-09-05 | RHD4CZ3L122IRR1104 | -157d |
| RHD4CZ3L122IRR1304 |  | Installing for HDPE Pipline 315 mm - (RD-L-12/2)-Z3-L122-IRR | 10d | 2027-09-06 | 2027-09-16 | RHD4PRSHLDOSIRR1000, RHD4PRSHLSTAGIRR1000, RHD4CZ3L122IRR1204 | -157d |
| RHD4CZ3L122IRR1404 |  | Primary Test for HDPE Pipline 315 mm - (RD-L-12/2)-Z3-L122-IRR | 5d | 2027-09-18 | 2027-09-22 | RHD4PRSHLDOSTC1000, RHD4PRSHLSTAGTC1000, RHD4CZ3L122IRR1304 | -135d |
| RHD4CZ3L122IRR1504 |  | Backfilling and warning tape works for HDPE Pipline 315 mm - (RD-L-12/2)-Z3-L122-IRR | 8d | 2027-09-25 | 2027-10-03 | RHD4CZ3L122IRR1404 | -135d |
|  | 1947 | **RHD4-02-002-L122-(IRR)-HDPE Pipes - 200 mm diameter** |  |  |  |  |  |
|  | 1945 | **RHD4-02-002-L122-(IRR)-HDPE Pipes - 160 mm diameter** |  | 2027-07-20 | 2027-09-21 |  |  |
| RHD4CZ3L122IRR1100 |  | Excavation works for HDPE Pipline 160 mm - (RD-L-12/2)-Z3-L122-IRR | 2d | 2027-07-20 | 2027-07-21 | RHD4ENSDZ3APPIRR140, RHD4ENMSRR2000, RHD4CZ3L122PT1103 | -157d |
| RHD4CZ3L122IRR1200 |  | Bedding works for HDPE Pipline 160 mm - (RD-L-12/2)-Z3-L122-IRR | 2d | 2027-07-22 | 2027-07-24 | RHD4CZ3L122IRR1100 | -142d |
| RHD4CZ3L122IRR1300 |  | Installing for HDPE Pipline 160 mm - (RD-L-12/2)-Z3-L122-IRR | 2d | 2027-07-25 | 2027-07-26 | RHD4PRSHLDOSIRR1000, RHD4PRSHLSTAGIRR1000, RHD4CZ3L122IRR1200 | -142d |
| RHD4CZ3L122IRR1400 |  | Primary Test for HDPE Pipline 160 mm - (RD-L-12/2)-Z3-L122-IRR | 2d | 2027-09-18 | 2027-09-19 | RHD4CZ3L122IRR1300, RHD4CZ3L122IRR3100 | -157d |
| RHD4CZ3L122IRR1500 |  | Backfilling and warning tape works for HDPE Pipline 160 mm - (RD-L-12/2)-Z3-L122-IRR | 2d | 2027-09-20 | 2027-09-21 | RHD4CZ3L122IRR1400 | -157d |
|  | 1953 | **RHD4-02-002-L122-(IRR)-Gate Valves (Direct Buried)** |  | 2027-09-14 | 2027-09-20 |  |  |
| RHD4CZ3L122IRR3100 |  | Installation for Direct Buried Gate Valves - (RD-L-12/2)-Z3-L122-IRR | 3d | 2027-09-14 | 2027-09-16 | RHD4PRSHLDOSIRR1100, RHD4PRSHLSTAGIRR1100, RHD4CZ3L122IRR1304 SS, RHD4CZ3L122IRR1304 FF, RHD4CZ3L122IRR1300 SS, RHD4CZ3L122IRR1300 FF | -157d |
| RHD4CZ3L122IRR3200 |  | Stem and Service box for Direct Buried Gate Valves - (RD-L-12/2)-Z3-L122-IRR | 3d | 2027-09-18 | 2027-09-20 | RHD4PRSHLDOSIRR1300, RHD4PRSHLSTAGIRR1300, RHD4CZ3L122IRR3100 | -154d |
|  | 1956 | **RHD4-02-002-L122-(IRR)-Wash out Chamber** |  | 2027-07-22 | 2027-07-31 |  |  |
| RHD4CZ3L122IRR2101 |  | Excavation and Bedding for Wash out Chamber for Irrigation Network - (RD-L-12/2)-Z3-L122-IRR | 2d | 2027-07-22 | 2027-07-24 | RHD4ENSDZ3APPIRR140, RHD4CZ3L122IRR1100 | -157d |
| RHD4CZ3L122IRR2201 |  | PC works for Wash out Chamber for Irrigation Network - (RD-L-12/2)-Z3-L122-IRR | 2d | 2027-07-25 | 2027-07-26 | RHD4CZ3L122IRR2101 | -157d |
| RHD4CZ3L122IRR2301 |  | Installation for Wash out Chamber for Irrigation Network - (RD-L-12/2)-Z3-L122-IRR | 2d | 2027-07-27 | 2027-07-28 | RHD4PRSHLDOSIRR1200, RHD4PRSHLDOSIRR1400, RHD4PRSHLSTAGIRR1200, RHD4PRSHLSTAGIRR1400, RHD4CZ3L122IRR2201 | -157d |
| RHD4CZ3L122IRR2401 |  | Backfilling works for Wash out Chamber for Irrigation Network - (RD-L-12/2)-Z3-L122-IRR | 2d | 2027-07-29 | 2027-07-31 | RHD4CZ3L122IRR2301 | -157d |
|  | 1957 | **RHD4-02-002-L122-(IRR)-Wash out Valves** |  | 2027-07-29 | 2027-08-02 |  |  |
| RHD4CZ3L122IRR3102 |  | Installation for Wash out Valve for Irrigation Network - (RD-L-12/2)-Z3-L122-IRR | 2d | 2027-07-29 | 2027-07-31 | RHD4PRSHLDOSIRR1100, RHD4PRSHLSTAGIRR1100, RHD4CZ3L122IRR2301 | -157d |
| RHD4CZ3L122IRR3202 |  | Stem and Service box for Wash out Valve for Irrigation Network - (RD-L-12/2)-Z3-L122-IRR | 2d | 2027-08-01 | 2027-08-02 | RHD4PRSHLDOSIRR1300, RHD4PRSHLSTAGIRR1300, RHD4CZ3L122IRR3102, RHD4CZ3L122IRR2401 | -157d |
|  | 1978 | **RHD4-02-002-Z3-L122-Medium Voltage Network - MV** |  | 2027-07-19 | 2027-11-04 |  |  |
|  | 1979 | **RHD4-02-002-L122-(MV)-Medium Voltage cable trench** |  | 2027-07-19 | 2027-10-13 |  |  |
| RHD4CZ3L122MV1100 |  | Excavation for Medium Voltage Trench - (RD-L-12/2)-Z3-L122-MV | 20d | 2027-07-19 | 2027-08-10 | RHD4ENSDZ3APPMV150, RHD4CZ3L122RD3100, RHD4CZ1C081MV4200 | -198d |
| RHD4CZ3L122MV1200 |  | Trench Backfilling for Medium Voltage Network - (RD-L-12/2)-Z3-L122-MV | 20d | 2027-09-20 | 2027-10-13 | RHD4CZ3L122MV3200, RHD4CZ3L122MV3101 | -198d |
|  | 1980 | **RHD4-02-002-L122-(MV)-Medium Voltage duct banks** |  | 2027-08-11 | 2027-08-30 |  |  |
| RHD4CZ3L122MV2100 |  | Excavation of Duct Banks for Medium Voltage Network - (RD-L-12/2)-Z3-L122-MV | 4d | 2027-08-11 | 2027-08-15 | RHD4ENSDZ3APPMV150, RHD4CZ3L122MV1100 | -148d |
| RHD4CZ3L122MV2200 |  | Installation of Duct Banks for Medium Voltage Network - (RD-L-12/2)-Z3-L122-MV | 6d | 2027-08-16 | 2027-08-22 | RHD4PRSHLDOSMV1000, RHD4PRSHLSTAGMV1000, RHD4CZ3L122MV2100 | -148d |
| RHD4CZ3L122MV2300 |  | Pouring of Duct Banks for Medium Voltage Network - (RD-L-12/2)-Z3-L122-MV | 4d | 2027-08-23 | 2027-08-26 | RHD4CZ3L122MV2200 | -148d |
| RHD4CZ3L122MV2400 |  | Backfilling of Duct Banks for Medium Voltage Network - (RD-L-12/2)-Z3-L122-MV | 3d | 2027-08-28 | 2027-08-30 | RHD4CZ3L122MV2300 | -148d |
|  | 1981 | **RHD4-02-002-L122-(MV)-Medium Voltage cables 3Cx 500 mm²** |  | 2027-08-11 | 2027-11-04 |  |  |
| RHD4CZ3L122MV3100 |  | Installation of Medium Voltage Cables 3Cx 500 mm² - (RD-L-12/2)-Z3-L122-MV | 17d | 2027-08-11 | 2027-08-30 | RHD4PRSHLDOSMV1100, RHD4ENMSMV2000, RHD4ENMSMV2010, RHD4PRSHLSTAGMV1100, RHD4CZ3L122MV1100 | -198d |
| RHD4CZ3L122MV3200 |  | Joints Installation of Medium Voltage Cables 3Cx 500 mm² - (RD-L-12/2)-Z3-L122-MV | 17d | 2027-08-31 | 2027-09-19 | RHD4PRSHLDOSMV1300, RHD4PRSHLSTAGMV1300, RHD4CZ3L122MV3100 | -198d |
| RHD4CZ3L122MV3300 |  | Testing of Medium Voltage Cables 3Cx 500 mm² - (RD-L-12/2)-Z3-L122-MV | 17d | 2027-10-14 | 2027-11-02 | RHD4CZ3L122MV3200, RHD4CZ3L122MV1200, RHD4CZ3L122MV2400 | -185d |
| RHD4CZ3L122MV3400 |  | Termination of Medium Voltage Cables 3Cx 500 mm² - (RD-L-12/2)-Z3-L122-MV | 2d | 2027-11-03 | 2027-11-04 | RHD4CZ3L122MV3300, RHD4CZ3L122MV5400 | -185d |
|  | 1982 | **RHD4-02-002-L122-(MV)-Medium Voltage cables 3Cx 50 mm²** |  | 2027-08-11 | 2027-10-21 |  |  |
| RHD4CZ3L122MV3101 |  | Installation of Medium Voltage Cables 3Cx 50 mm² - (RD-L-12/2)-Z3-L122-MV | 2d | 2027-08-11 | 2027-08-12 | RHD4PRSHLDOSMV1200, RHD4ENMSMV2000, RHD4ENMSMV2010, RHD4PRSHLSTAGMV1200, RHD4CZ3L122MV1100 | -166d |
| RHD4CZ3L122MV3301 |  | Testing of Medium Voltage Cables 3Cx 50 mm² - (RD-L-12/2)-Z3-L122-MV | 2d | 2027-10-14 | 2027-10-16 | RHD4CZ3L122MV3101, RHD4CZ3L122MV1200 | -198d |
| RHD4CZ3L122MV3401 |  | Termination of Medium Voltage Cables 3Cx 50 mm² - (RD-L-12/2)-Z3-L122-MV | 5d | 2027-10-17 | 2027-10-21 | RHD4CZ3L122MV3301, RHD4CZ3L122MV5400 | -173d |
|  | 1984 | **RHD4-02-002-L122-(MV)-Unit Substations** |  | 2027-08-11 | 2027-08-25 |  |  |
| RHD4CZ3L122MV5100 |  | Excavation for Unit Substations for Medium Voltage Network - (RD-L-12/2)-Z3-L122-MV | 2d | 2027-08-11 | 2027-08-12 | RHD4ENSDZ3APPMV150, RHD4CZ3L122MV1100 | -137d |
| RHD4CZ3L122MV5200 |  | Concrete Base Placement for Unit Substations for Medium Voltage Network - (RD-L-12/2)-Z3-L122-MV | 2d | 2027-08-14 | 2027-08-15 | RHD4CZ3L122MV5100 | -137d |
| RHD4CZ3L122MV5300 |  | Installation for Fences and doors for Medium Voltage Network - (RD-L-12/2)-Z3-L122-MV | 5d | 2027-08-16 | 2027-08-21 | RHD4CZ3L122MV5200 | -137d |
| RHD4CZ3L122MV5400 |  | Installation for Unit Substations for Medium Voltage Network - (RD-L-12/2)-Z3-L122-MV | 4d | 2027-08-22 | 2027-08-25 | RHD4PRLOLSTAGMV1601, RHD4PRLOLSTAGMV1602, RHD4CZ3L122MV5300 | -137d |
|  | 5388 | **RHD4-02-002-L122-(MV)-Normally open Point (Outdoor Type)** |  |  |  |  |  |

| ID | WBS | Task | Duration | Start | Finish | Predecessors | Total float |
| --- | --- | --- | --- | --- | --- | --- | --- |
|  | 1985 | **RHD4-02-002-Z3-L122-Low Voltage Network - LV** |  | 2027-09-13 | 2027-12-09 |  |  |
|  | 1986 | **RHD4-02-002-L122-(LV)-Low Voltage duct banks** |  | 2027-09-13 | 2027-10-03 |  |  |
| RHD4CZ3L122LV2100 |  | Excavation of Duct Banks for Low Voltage Network - (RD-L-12/2)-Z3-L122-LV | 2d | 2027-09-13 | 2027-09-14 | RHD4ENSDZ3APPLV160, RHD4CZ3L122RW3002, RHD4CZ3L122PT2401 | -157d |
| RHD4CZ3L122LV2200 |  | Installation of Duct Banks for Low Voltage Network - (RD-L-12/2)-Z3-L122-LV | 2d | 2027-09-15 | 2027-09-16 | RHD4PRSHLDOSLV1000, RHD4PRSHLSTAGLV1000, RHD4CZ3L122LV2100 | -157d |
| RHD4CZ3L122LV2300 |  | Pouring of Duct Banks for Low Voltage Network - (RD-L-12/2)-Z3-L122-LV | 6d | 2027-09-18 | 2027-09-25 | RHD4CZ3L122LV2200 | -157d |
| RHD4CZ3L122LV2400 |  | Backfilling of Duct Banks for Low Voltage Network - (RD-L-12/2)-Z3-L122-LV | 7d | 2027-09-26 | 2027-10-03 | RHD4CZ3L122LV2300, RHD4CZ3L122IRR3200 | -157d |
|  | 1989 | **RHD4-02-002-L122-(LV)-Low Voltage Distribution Pillars** |  | 2027-12-01 | 2027-12-09 |  |  |
| RHD4CZ3L122LV4100 |  | Leveling for Distribution Pillars for Low Voltage Network - (RD-L-12/2)-Z3-L122-LV | 3d | 2027-12-01 | 2027-12-04 | RHD4CZ3L122LV3300, RHD4CZ3L122IRR1504 | -185d |
| RHD4CZ3L122LV4200 |  | Lean Concrete for Distribution Pillars for Low Voltage Network - (RD-L-12/2)-Z3-L122-LV | 2d | 2027-12-05 | 2027-12-06 | RHD4CZ3L122LV4100 | -185d |
| RHD4CZ3L122LV4300 |  | Installation of Distribution Pillars for Low Voltage Network - (RD-L-12/2)-Z3-L122-LV | 3d | 2027-12-07 | 2027-12-09 | RHD4PRSHLDOSLV1200, RHD4PRSHLDOSLV1300, RHD4PRSHLSTAGLV1200, RHD4PRSHLSTAGLV1300, RHD4CZ3L122LV4200 | -185d |
|  | 1990 | **RHD4-02-002-L122-(LV)-Low Voltage Distribution Pillars Earthing** |  |  |  |  |  |
|  | 4257 | **RHD4-02-002-L122-(LV)-Low Voltage Drawpit** |  | 2027-09-13 | 2027-09-16 |  |  |
| RHD4CZ3L122LV5100 |  | Excavation of Drawpit size 900x900x1000mm for Low Voltage Network - (RD-L-12/2)-Z3-L122-LV | 2d | 2027-09-13 | 2027-09-14 | RHD4CZ3L122LV2100 SS, RHD4CZ3L122MV5400 | -152d |
| RHD4CZ3L122LV5200 |  | Installation of Drawpit size 900x900x1000mm for Low Voltage Network - (RD-L-12/2)-Z3-L122-LV | 2d | 2027-09-15 | 2027-09-16 | RHD4CZ3L122LV5100, RHD4CZ3L122SW3500 | -152d |
|  | 1988 | **RHD4-02-002-L122-(LV)-Low Voltage cables** |  | 2027-11-06 | 2027-12-05 |  |  |
| RHD4CZ3L122LV3100 |  | Excavation for Low Voltage Cables for Low Voltage Network - (RD-L-12/2)-Z3-L122-LV | 8d | 2027-11-06 | 2027-11-14 | RHD4ENSDZ3APPLV160, RHD4CZ3L122LV2400, RHD4CZ3L122MV1200, RHD4CZ3L122MV5400, RHD4CZ3L122MV3400, RHD4CZ3L122MV3401 | -185d |
| RHD4CZ3L122LV3200 |  | Cable Laying of Low Voltage Cables for Low Voltage Network - (RD-L-12/2)-Z3-L122-LV | 7d | 2027-11-15 | 2027-11-22 | RHD4PRSHLDOSLV1100, RHD4ENMSLV2000, RHD4ENMSLV2010, RHD4PRSHLSTAGLV1100, RHD4CZ3L122LV3100 | -185d |
| RHD4CZ3L122LV3300 |  | Warning tape and Backfill for Low Voltage Cables for Low Voltage Network - (RD-L-12/2)-Z3-L122-LV | 7d | 2027-11-23 | 2027-11-30 | RHD4CZ3L122LV3200 | -185d |
| RHD4CZ3L122LV3400 |  | Testing of Low Voltage Cables for Low Voltage Network - (RD-L-12/2)-Z3-L122-LV | 4d | 2027-12-01 | 2027-12-05 | RHD4CZ3L122LV3300, RHD4CZ3C083LV3400 | -181d |
|  | 1991 | **RHD4-02-002-Z3-L122-Street Lighting Network - SL** |  | 2027-09-13 | 2028-07-04 |  |  |
|  | 1994 | **RHD4-02-002-L122-(SL)-Street Lighting cables** |  | 2028-04-20 | 2028-06-19 |  |  |
| RHD4CZ3L122SL3100 |  | Excavation for Street Lighting Cables for Street Lighting Network - (RD-L-12/2)-Z3-L122-SL | 15d | 2028-04-20 | 2028-05-10 | RHD4ENSDZ3APPSL170, RHD4CZ3L122MV3401, RHD4CZ3L122MV3400, RHD4CZ3L122SL1300 | -165d |
| RHD4CZ3L122SL3200 |  | Cable Laying of Street Lighting Cables for Street Lighting Network - (RD-L-12/2)-Z3-L122-SL | 13d | 2028-05-11 | 2028-05-25 | RHD4PRSHLDOSSL1100, RHD4ENMSSL2000, RHD4ENMSSL2010, RHD4PRSHLSTAGSL1100, RHD4CZ3L122SL3100 | -165d |
| RHD4CZ3L122SL3300 |  | Warning tape and Backfill for Street Lighting Cables for Street Lighting Network - (RD-L-12/2)-Z3-L122-SL | 13d | 2028-05-27 | 2028-06-10 | RHD4CZ3L122SL3200 | -165d |
| RHD4CZ3L122SL3400 |  | Testing of Street Lighting Cables for Street Lighting Network - (RD-L-12/2)-Z3-L122-SL | 8d | 2028-06-11 | 2028-06-19 | RHD4CZ3L122SL3300, RHD4CZ3L122LV3400 | -165d |
|  | 1997 | **RHD4-02-002-L122-(SL)-Street Lighting Earthing System** |  | 2028-06-24 | 2028-06-25 |  |  |
| RHD4CZ3L122SL6100 |  | Installation of Earthing for Lighting Poles and Fedder Pillers for Street Lighting Network - (RD-L-12/2)-Z3-L122-SL | 2d | 2028-06-24 | 2028-06-25 | RHD4ENMSER2000, RHD4ENMSER2010, RHD4CZ3L122SL1400 | -165d |
|  | 5019 | **RHD4-02-002-L122-(SL)-Street Lighting duct banks** |  | 2027-09-13 | 2027-10-03 |  |  |
| RHD4CZ3L122SL2100 |  | Excavation of Duct Banks for Street Lighting Network - (RD-L-12/2)-Z3-L122-SL | 3d | 2027-09-13 | 2027-09-15 | RHD4CZ3L122PT2401 | -158d |
| RHD4CZ3L122SL2200 |  | Installation of Duct Banks for Street Lighting Network - (RD-L-12/2)-Z3-L122-SL | 4d | 2027-09-16 | 2027-09-20 | RHD4CZ3L122SL2100 | -158d |
| RHD4CZ3L122SL2300 |  | Pouring of Duct Banks for Street Lighting Network - (RD-L-12/2)-Z3-L122-SL | 5d | 2027-09-21 | 2027-09-27 | RHD4CZ3L122SL2200 | -158d |
| RHD4CZ3L122SL2400 |  | Backfilling of Duct Banks for Street Lighting Network - (RD-L-12/2)-Z3-L122-SL | 5d | 2027-09-28 | 2027-10-03 | RHD4CZ3L122SL2300 | -151d |
|  | 5020 | **RHD4-02-002-L122-(SL)-Street Lighting Drawpit** |  | 2027-09-28 | 2027-10-06 |  |  |
| RHD4CZ3L122SL5100 |  | Excavation of Drawpit size 600x600x900mm for Street Lighting Network - (RD-L-12/2)-Z3-L122-SL | 2d | 2027-09-28 | 2027-09-29 | RHD4CZ3L122SL2300, RHD4CZ3L122MV5400 | -158d |
| RHD4CZ3L122SL5200 |  | Installation of Drawpit size 600x600x900mm for Street Lighting Network - (RD-L-12/2)-Z3-L122-SL | 6d | 2027-09-30 | 2027-10-06 | RHD4CZ3L122SL5100, RHD4CZ3L122MV5400 | -158d |
|  | 1995 | **RHD4-02-002-L122-(SL)-Street Lighting Poles** |  | 2027-10-14 | 2028-07-04 |  |  |
| RHD4CZ3L122SL1100 |  | Excavation for RC Base for Lighting Poles for Street Lighting Network - (RD-L-12/2)-Z3-L122-SL | 8d | 2027-10-14 | 2027-10-23 | RHD4ENSDZ3APPSL170, RHD4CZ3L122MV1200, RHD4CZ3L122MV5400, RHD4CZ3L122IRR1500 | -175d |
| RHD4CZ3L122SL1200 |  | Installation for RC Base for Lighting Poles for Street Lighting Network - (RD-L-12/2)-Z3-L122-SL | 8d | 2028-04-02 | 2028-04-10 | RHD4CZ3L122SL1100, RHD4CZ3L122SL5200, RHD4CSWL1B07D151214 SS, RHD4CZ2L102RD7100, RHD4CZ7C013RD8100 | -198d |
| RHD4CZ3L122SL1300 |  | Backfill for RC Base for Lighting Poles for Street Lighting Network - (RD-L-12/2)-Z3-L122-SL | 8d | 2028-04-11 | 2028-04-19 | RHD4CZ9L02RD7100, RHD4CZ3L122SL1200, RHD4CZ4L09ICT2400 | -198d |
| RHD4CZ3L122SL1400 |  | Installation for Lighting Poles for Street Lighting Network - (RD-L-12/2)-Z3-L122-SL | 11d | 2028-06-11 | 2028-06-22 | RHD4PRSHLDOSSL1200, RHD4ENMSSL2000, RHD4ENMSSL2010, RHD4PRSHLSTAGSL1200, RHD4CZ3L122SL1300, RHD4CZ3L122SL3400 SS | -165d |
| RHD4CZ3L122SL1500 |  | Luminaire Installation for Lighting Poles for Street Lighting Network - (RD-L-12/2)-Z3-L122-SL | 8d | 2028-06-26 | 2028-07-04 | RHD4PRSHLDOSSL1300, RHD4PRSHLSTAGSL1300, RHD4CZ3L122SL1400, RHD4CZ3L122SL6100 | -165d |
|  | 2003 | **RHD4-02-002-Z3-L122-Telecommunications Network - TC** |  | 2027-01-02 | 2028-06-29 |  |  |
|  | 2004 | **RHD4-02-002-L122-(TC)-Telecommunications Ducts** |  | 2028-04-20 | 2028-06-29 |  |  |
| RHD4CZ3L122TC2100 |  | Excavation of HDPE Ducts for Telecom Network - (RD-L-12/2)-Z3-L122-TC | 21d | 2028-04-20 | 2028-05-17 | RHD4ENSDZ3APPTC190, RHD4CZ3L122TC3400, RHD4CZ3L122SL1300 | -198d |
| RHD4CZ3L122TC2200 |  | Installation of HDPE Ducts for Telecom Network - (RD-L-12/2)-Z3-L122-TC | 11d | 2028-05-18 | 2028-05-30 | RHD4PRSHLDOSTC1000, RHD4PRSHLSTAGTC1000, RHD4CZ3L122TC2100 | -193d |
| RHD4CZ3L122TC2400 |  | Backfilling of HDPE Ducts for Telecom Network - (RD-L-12/2)-Z3-L122-TC | 21d | 2028-06-06 | 2028-06-29 | RHD4CZ3L122TC2200, RHD4CZ3L122TC5200, RHD4GNSLZ7FT1600, RHD4CZ7RA03CCTV6100, RHD4CZ4L014CCTV6100, RHD4CZ5L08RD7100 | -198d |
|  | 2005 | **RHD4-02-002-L122-(TC)-Telecommunications Manholes** |  | 2028-05-18 | 2028-06-05 |  |  |
| RHD4CZ3L122TC5100 |  | Excavation for Manholes for Telecom Network - (RD-L-12/2)-Z3-L122-TC | 8d | 2028-05-18 | 2028-05-27 | RHD4ENSDZ3APPTC190, RHD4CZ3L122TC2100, RHD4CZ7A012RD5100, RHD4CZ9L06RD7100 | -198d |
| RHD4CZ3L122TC5200 |  | Installation of Manholes for Telecom Network - (RD-L-12/2)-Z3-L122-TC | 8d | 2028-05-28 | 2028-06-05 | RHD4PRSHLDOSTC1200, RHD4PRSHLSTAGTC1200, RHD4CZ3L122TC5100, RHD4CZ3L122TC2200 SS, RHD4CSTL1B07D151185 | -198d |
|  | 2006 | **RHD4-02-002-L122-(TC)-Telecomminications Road Crossings** |  | 2027-01-02 | 2027-02-02 |  |  |
| RHD4CZ3L122TC3100 |  | Excavation for Road Crossings for Telecom Network - (RD-L-12/2)-Z3-L122-TC | 2d | 2027-01-02 | 2027-01-03 | RHD4ENSDZ3APPTC190, RHD4CZ3L122ST3102 | -154d |
| RHD4CZ3L122TC3200 |  | Installation of Road Crossings for Telecom Network - (RD-L-12/2)-Z3-L122-TC | 2d | 2027-01-23 | 2027-01-25 | RHD4PRSHLDOSTC1100, RHD4PRSHLSTAGTC1100, RHD4CZ3L122TC3100 | -168.02d |
| RHD4CZ3L122TC3300 |  | Pouring of Road Crossings for Telecom Network - (RD-L-12/2)-Z3-L122-TC | 2d | 2027-01-25 | 2027-01-27 | RHD4CZ3L122TC3200 | -168.02d |
| RHD4CZ3L122TC3400 |  | Backfilling of Road Crossings for Telecom Network - (RD-L-12/2)-Z3-L122-TC | 5d | 2027-01-27 | 2027-02-02 | RHD4CZ3L122TC3300 | -168.02d |
|  | 2007 | **RHD4-02-002-Z3-L122-Information and Communication Technologies - ICT** |  | 2027-01-04 | 2027-05-09 |  |  |
|  | 2008 | **RHD4-02-002-L122-(ICT)-Information and Communication Technologies Ducts** |  | 2027-03-02 | 2027-05-09 |  |  |
| RHD4CZ3L122ICT2100 |  | Excavation of HDPE Ducts for ICT Network - (RD-L-12/2)-Z3-L122-ICT | 20d | 2027-03-02 | 2027-03-28 | RHD4ENSDZ3APPICT200, RHD4CZ3L122ICT3400 | -167d |
| RHD4CZ3L122ICT2200 |  | Installation of HDPE Ducts for ICT Network - (RD-L-12/2)-Z3-L122-ICT | 16d | 2027-03-29 | 2027-04-15 | RHD4PRSHLDOSICT1000, RHD4PRSHLSTAGICT1000, RHD4CZ3L122ICT2100 | -167d |
| RHD4CZ3L122ICT2400 |  | Backfilling of HDPE Ducts for ICT Network - (RD-L-12/2)-Z3-L122-ICT | 20d | 2027-04-17 | 2027-05-09 | RHD4CZ3L122ICT2200, RHD4CZ3L122ICT5200 | -167d |
|  | 2009 | **RHD4-02-002-L122-(ICT)-Information and Communication Technologies Manholes** |  | 2027-03-29 | 2027-04-15 |  |  |
| RHD4CZ3L122ICT5100 |  | Excavation for Manholes for ICT Network - (RD-L-12/2)-Z3-L122-ICT | 8d | 2027-03-29 | 2027-04-06 | RHD4ENSDZ3APPICT200, RHD4CZ3L122ICT2100 | -167d |
| RHD4CZ3L122ICT5200 |  | Installation of Manholes for ICT Network - (RD-L-12/2)-Z3-L122-ICT | 8d | 2027-04-07 | 2027-04-15 | RHD4PRSHLDOSICT1200, RHD4PRSHLSTAGICT1200, RHD4CZ3L122ICT5100 | -167d |
|  | 2010 | **RHD4-02-002-L122-(ICT)-Information and Communication Technologies Road Crossings** |  | 2027-01-04 | 2027-03-01 |  |  |
| RHD4CZ3L122ICT3100 |  | Excavation for Road Crossings for ICT Network - (RD-L-12/2)-Z3-L122-ICT | 4d | 2027-01-04 | 2027-01-07 | RHD4ENSDZ3APPICT200, RHD4CZ3L122TC3100 | -154d |
| RHD4CZ3L122ICT3200 |  | Installation of Road Crossings for ICT Network - (RD-L-12/2)-Z3-L122-ICT | 2d | 2027-02-14 | 2027-02-15 | RHD4PRSHLDOSICT1100, RHD4PRSHLSTAGICT1100, RHD4CZ3L122ICT3100, RHD4CZ3L122TC3200 | -185d |
| RHD4CZ3L122ICT3300 |  | Pouring of Road Crossings for ICT Network - (RD-L-12/2)-Z3-L122-ICT | 5d | 2027-02-16 | 2027-02-21 | RHD4CZ3L122ICT3200, RHD4CZ3L122TC3300 | -185d |
| RHD4CZ3L122ICT3400 |  | Backfilling of Road Crossings for ICT Network - (RD-L-12/2)-Z3-L122-ICT | 6d | 2027-02-23 | 2027-03-01 | RHD4CZ3L122ICT3300, RHD4CZ3L122TC3400 | -185d |
|  | 1998 | **RHD4-02-002-Z3-L122-Landscape Network - LS** |  |  |  |  |  |
|  | 1999 | **RHD4-02-002-L122-(LS)-Landscape Lighting cables** |  |  |  |  |  |
|  | 2000 | **RHD4-02-002-L122-(LS)-Landscape Feeder Pillars** |  |  |  |  |  |

| ID | WBS | Task | Duration | Start | Finish | Predecessors | Total float |
| --- | --- | --- | --- | --- | --- | --- | --- |
|  | 2001 | **RHD4-02-002-L122-(LS)-Landscape Bollard Poles** |  |  |  |  |  |
|  | 2002 | **RHD4-02-002-L122-(LS)-Landscape Feeder Pillars Earthing** |  |  |  |  |  |
|  | 2011 | **RHD4-02-002-Z3-L122-Security Network - CCTV** |  | 2028-07-01 | 2028-08-16 |  |  |
|  | 2012 | **RHD4-02-002-L122-(CCTV)-Civil Works** |  | 2028-07-01 | 2028-07-11 |  |  |
| RHD4CZ3L122CCTV2100 |  | Civil Works for Security Network - (RD-L-12/2)-Z3-L122-CCTV | 10d | 2028-07-01 | 2028-07-11 | RHD4CZ3L122ICT2400, RHD4CZ3L122TC2400, RHD4HOASTUN1APP1200 SS | -198d |
|  | 2013 | **RHD4-02-002-L122-(CCTV)-CCTV Poles** |  | 2028-07-12 | 2028-07-23 |  |  |
| RHD4CZ3L122CCTV1100 |  | Excavation for RC Base for CCTV Poles for Security Network - (RD-L-12/2)-Z3-L122-CCTV | 2d | 2028-07-12 | 2028-07-13 | RHD4ENSDZ3APPCCTV210, RHD4CZ3L122CCTV2100, RHD4CZ2C082RD8100 | -198d |
| RHD4CZ3L122CCTV1200 |  | Installation for RC Base for CCTV Poles for Security Network - (RD-L-12/2)-Z3-L122-CCTV | 2d | 2028-07-15 | 2028-07-16 | RHD4CZ3L122CCTV1100 | -198d |
| RHD4CZ3L122CCTV1300 |  | Backfill for RC Base for CCTV Poles for Security Network - (RD-L-12/2)-Z3-L122-CCTV | 2d | 2028-07-17 | 2028-07-18 | RHD4CZ3L122CCTV1200 | -198d |
| RHD4CZ3L122CCTV1400 |  | Installation for CCTV Poles for Security Network - (RD-L-12/2)-Z3-L122-CCTV | 2d | 2028-07-19 | 2028-07-20 | RHD4PRSHLDOSCCTV1000, RHD4PRSHLSTACCTV1000, RHD4CZ3L122CCTV1300 | -198d |
| RHD4CZ3L122CCTV1500 |  | Protection post Installation for CCTV Poles for Security Network - (RD-L-12/2)-Z3-L122-CCTV | 2d | 2028-07-22 | 2028-07-23 | RHD4CZ3L122CCTV1400 | -176d |
|  | 2014 | **RHD4-02-002-L122-(CCTV)-Camera** |  | 2028-07-24 | 2028-07-25 |  |  |
| RHD4CZ3L122CCTV3100 |  | Installation for Cameras for Security Network - (RD-L-12/2)-Z3-L122-CCTV | 2d | 2028-07-24 | 2028-07-25 | RHD4PRSHLDOSCCTV1100, RHD4PRSHLSTACCTV1100, RHD4CZ3L122CCTV1400, RHD4CZ3L122CCTV4100, RHD4HOASZ4APPSL170, RHD4CZ4L014RD7100 | -198d |
|  | 2015 | **RHD4-02-002-L122-(CCTV)-Power and Infrastructure** |  | 2028-07-22 | 2028-07-25 |  |  |
| RHD4CZ3L122CCTV4100 |  | Installation of Power outlet, UPS and midspan for PTZ Camerafor Cameras for Security Network - (RD-L-12/2)-Z3-L122-CCTV | 2d | 2028-07-22 | 2028-07-23 | RHD4PRSHLDOSCCTV1300, RHD4PRSHLSTACCTV1300, RHD4CZ3L122CCTV1400 | -198d |
| RHD4CZ3L122CCTV4200 |  | Short Range Wireless PoP wireless Bridgefor CCTV Poles for Security Network - (RD-L-12/2)-Z3-L122-CCTV | 2d | 2028-07-24 | 2028-07-25 | RHD4CZ3L122CCTV4100 | -198d |
|  | 2017 | **RHD4-02-002-L122-(CCTV)-CCTV Panels and Components** |  | 2028-07-26 | 2028-08-16 |  |  |
| RHD4CZ3L122CCTV6100 |  | Installation for CCTV Panels for Security Network - (RD-L-12/2)-Z3-L122-CCTV | 19d | 2028-07-26 | 2028-08-16 | RHD4PRSHLDOSCCTV1200, RHD4PRSHLSTACCTV1200, RHD4PRLOLSTACCTV1001, RHD4CZ3L122CCTV4200, RHD4CZ3L122CCTV3100 | -198d |
|  | 1461 | **RHD4-02-002-Z3-C083** |  | 2027-01-02 | 2028-10-04 |  |  |
|  | 567 | **RHD4-02-002-Z3-C083-Sewage Network - SW** |  | 2027-05-19 | 2027-06-30 |  |  |
|  | 577 | **RHD4-02-002-C083-(SW)-MH Works - 1200 mm diameter** |  | 2027-06-07 | 2027-06-30 |  |  |
| RHD4CZ3C083SW3100 |  | Excavation and PC Blinding works for MH 1200 mm - (RD-C-8 /3)-Z3-C083-SW | 3d | 2027-06-07 | 2027-06-09 | RHD4CZ2C082SW3100, RHD4CZ3C083SW2500 | -179d |
| RHD4CZ3C083SW3200 |  | Installation of Base for MH 1200 mm - (RD-C-8 /3)-Z3-C083-SW | 5d | 2027-06-10 | 2027-06-15 | RHD4CZ3C083SW3100 | -179d |
| RHD4CZ3C083SW3300 |  | MH Ring and C.Slab works and Backfilling works for MH 1200 mm - (RD-C-8 /3)-Z3-C083-SW | 5d | 2027-06-16 | 2027-06-21 | RHD4CZ3C083SW3200 | -179d |
| RHD4CZ3C083SW3400 |  | Steel Cover for MH 1200 mm - (RD-C-8 /3)-Z3-C083-SW | 3d | 2027-06-22 | 2027-06-24 | RHD4CZ3C083SW3300 | -179d |
| RHD4CZ3C083SW3500 |  | Finishing, Benching, Testing works for MH 1200 mm - (RD-C-8 /3)-Z3-C083-SW | 5d | 2027-06-26 | 2027-06-30 | RHD4CZ3C083SW3400, RHD4CZ3C083ST8500 | -179d |
|  | 573 | **RHD4-02-002-C083-(SW)-UPVC Pipes - 200 mm diameter** |  | 2027-05-19 | 2027-06-06 |  |  |
| RHD4CZ3C083SW2100 |  | Excavation works for UPVC Pipe Line 200 mm - (RD-C-8 /3)-Z3-C083-SW | 3d | 2027-05-19 | 2027-05-22 | RHD4ENSDZ3APPSW120, RHD4CZ3L122ST7300 | -179d |
| RHD4CZ3C083SW2200 |  | Bedding works for UPVC Pipe Line 200 mm - (RD-C-8 /3)-Z3-C083-SW | 3d | 2027-05-23 | 2027-05-25 | RHD4CZ3C083SW2100 | -179d |
| RHD4CZ3C083SW2300 |  | Installing for UPVC Pipe Line 200 mm - (RD-C-8 /3)-Z3-C083-SW | 4d | 2027-05-26 | 2027-05-30 | RHD4CZ3C083SW2200 | -179d |
| RHD4CZ3C083SW2400 |  | Primary Test for UPVC Pipe Line 200 mm - (RD-C-8 /3)-Z3-C083-SW | 3d | 2027-05-31 | 2027-06-02 | RHD4CZ3C083SW2300 | -179d |
| RHD4CZ3C083SW2500 |  | Backfilling and warning tape works for UPVC Pipe Line 200 mm - (RD-C-8 /3)-Z3-C083-SW | 3d | 2027-06-03 | 2027-06-06 | RHD4CZ3C083SW2400 | -179d |
|  | 1583 | **RHD4-02-002-Z3-C083-Crossings Irrigation Network - IRRC** |  |  |  |  |  |
|  | 1588 | **RHD4-02-002-C083-(IRRC)-HDPE Pipes - 315 mm diameter** |  |  |  |  |  |
|  | 1640 | **RHD4-02-002-Z3-C083-Road Works - RD** |  | 2027-01-28 | 2028-10-04 |  |  |
|  | 1641 | **RHD4-02-002-C083-(RD)-Subgrade** |  | 2027-01-28 | 2027-02-01 |  |  |
| RHD4CZ3C083RD1100 |  | Supply, lay and compaction subgrade compacted thickness 300 mm for Roads - (RD-C-8 /3)-Z3-C083-RD | 4d | 2027-01-28 | 2027-02-01 | RHD4ENSDZ3APPEW100, RHD4ENSDZ3APPRD220, RHD4CZ3C083ST1502, RHD4CZ3C083SL2400, RHD4CZ3C083ST7300 SS | -136d |
|  | 1642 | **RHD4-02-002-C083-(RD)-Aggregate Base Course** |  | 2027-02-02 | 2027-02-06 |  |  |
| RHD4CZ3C083RD2100 |  | Supply, lay and compaction Aggregate base course compacted thickness 300 mmfor Roads - (RD-C-8 /3)-Z3-C083-RD | 4d | 2027-02-02 | 2027-02-06 | RHD4PRSHLDOSRD1000, RHD4PRSHLSTAGRD1000, RHD4CZ3C083RD1100 | -136d |
|  | 1643 | **RHD4-02-002-C083-(RD)-Bituminous base course Two Layers, including (MC1)&(RC2)** |  | 2027-02-07 | 2027-12-14 |  |  |
| RHD4CZ3C083RD3100 |  | Supply, lay and Asphaltic base course including Prime Coat (MC1) for 1st Layer - (RD-C-8 /3)-Z3-C083-RD | 4d | 2027-02-07 | 2027-02-10 | RHD4PRSHLDOSRD1100, RHD4ENMSASPH2000, RHD4ENMSASPH2010, RHD4PRSHLSTAGRD1100, RHD4CZ3C083RD2100 | -136d |
| RHD4CZ3C083RD3200 |  | Supply, lay and Asphaltic base course including Tack Coat (RC2) for 2nd Layer - (RD-C-8 /3)-Z3-C083-RD | 4d | 2027-12-09 | 2027-12-14 | RHD4PRSHLDOSRD1100, RHD4PRSHLSTAGRD1100, RHD4CZ3C083RD3100, RHD4CZ3C083CCTV6100 | -161.02d |
|  | 1645 | **RHD4-02-002-C083-(RD)-Precast Concrete Curb** |  | 2027-12-14 | 2027-12-27 |  |  |
| RHD4CZ3C083RD5100 |  | Supply and installation Precast Concrete Kerb for Roads - (RD-C-8 /3)-Z3-C083-RD | 11d | 2027-12-14 | 2027-12-27 | RHD4PRSHLDOSRD1200, RHD4ENMSRD2000, RHD4ENMSRD2010, RHD4PRSHLSTAGRD1200, RHD4CZ3C083RD3200 | -161.02d |
|  | 1648 | **RHD4-02-002-C083-(RD)-Traffic Signage** |  | 2028-09-20 | 2028-09-27 |  |  |
| RHD4CZ3C083RD8100 |  | Installation of Traffic Signage for Road Network - (RD-C-8 /3)-Z3-C083-RD | 6d | 2028-09-20 | 2028-09-27 | RHD4PRSHLDOSRD1600, RHD4PRSHLSTAGST1401, RHD4PRSHLSTAGST1501, RHD4PRSHLSTAGRD1600, RHD4CZ3C083RD5100, RHD4CZ3C083TC2400, RHD4CZ3C083ICT2400, RHD4CZ3C011RD8100, RHD4CZ3C083SW3500, RHD4CZ3C011ST4600 | -179d |
|  | 1646 | **RHD4-02-002-C083-(RD)-Precast Interlocking Block Pavers** |  |  |  |  |  |
|  | 1644 | **RHD4-02-002-C083-(RD)-Bituminous concrete wearing course including tack coat (RC2)** |  | 2028-09-28 | 2028-10-04 |  |  |
| RHD4CZ3C083RD4100 |  | Supply, lay and compaction Asphaltic wearing course including tack Coat (RC2)for Road Network - (RD-C-8 /3)-Z3-C083-RD | 6d | 2028-09-28 | 2028-10-04 | RHD4CZ3C083RD5100, RHD4CZ3C011RD4100, RHD4CZ3C083RD8100 | -179d |
|  | 1649 | **RHD4-02-002-C083-(RD)-Speed Table and Wheel Stopper** |  |  |  |  |  |
|  | 1647 | **RHD4-02-002-C083-(RD)-Pavement Marking** |  | 2028-08-03 | 2028-08-10 |  |  |
| RHD4CZ3C083RD7100 |  | Pavement Markings for Road Network - (RD-C-8 /3)-Z3-C083-RD | 7d | 2028-08-03 | 2028-08-10 | RHD4PRSHLDOSRD1500, RHD4PRSHLSTAGRD1500, RHD4CZ3C011RD7100 | -180d |
|  | 1465 | **RHD4-02-002-Z3-C083-Storm Network - ST** |  | 2027-01-02 | 2027-03-31 |  |  |
|  | 5251 | **RHD4-02-002-C083-(ST)-GRP Pipes - 600 mm diameter** |  | 2027-01-07 | 2027-01-18 |  |  |
| RHD4CZ3C083ST1102 |  | Excavation works for GRP Pipe Line 600 mm - (RD-C-8 /3)-Z3-C083-ST | 2d | 2027-01-07 | 2027-01-09 | RHD4CZ3C083ST3100 | -136d |
| RHD4CZ3C083ST1202 |  | Bedding works for GRP Pipe Line 600 mm - (RD-C-8 /3)-Z3-C083-ST | 2d | 2027-01-10 | 2027-01-11 | RHD4CZ3C083ST1102 | -136d |
| RHD4CZ3C083ST1302 |  | Installing for GRP Pipe Line 600 mm - (RD-C-8 /3)-Z3-C083-ST | 2d | 2027-01-12 | 2027-01-13 | RHD4CZ3C083ST1202 | -136d |
| RHD4CZ3C083ST1402 |  | Primary Test for GRP Pipe Line 600 mm - (RD-C-8 /3)-Z3-C083-ST | 2d | 2027-01-14 | 2027-01-16 | RHD4CZ3C083ST1302 | -136d |
| RHD4CZ3C083ST1502 |  | Backfilling and warning tape works for GRP Pipe Line 600 mm - (RD-C-8 /3)-Z3-C083-ST | 2d | 2027-01-17 | 2027-01-18 | RHD4CZ3C083ST1402 | -136d |
|  | 710 | **RHD4-02-002-C083-(ST)-GRP Pipes - 500 mm diameter** |  | 2027-01-10 | 2027-01-23 |  |  |
| RHD4CZ3C083ST1101 |  | Excavation works for GRP Pipe Line 500 mm - (RD-C-8 /3)-Z3-C083-ST | 2d | 2027-01-10 | 2027-01-11 | RHD4CZ3C083ST1102 | -120d |
| RHD4CZ3C083ST1201 |  | Bedding works for GRP Pipe Line 500 mm - (RD-C-8 /3)-Z3-C083-ST | 2d | 2027-01-12 | 2027-01-13 | RHD4CZ3C083ST1101 | -120d |
| RHD4CZ3C083ST1301 |  | Installing for GRP Pipe Line 500 mm - (RD-C-8 /3)-Z3-C083-ST | 3d | 2027-01-14 | 2027-01-17 | RHD4CZ3C083ST1201 | -120d |
| RHD4CZ3C083ST1401 |  | Primary Test for GRP Pipe Line 500 mm - (RD-C-8 /3)-Z3-C083-ST | 2d | 2027-01-18 | 2027-01-19 | RHD4CZ3C083ST1301 | -120d |
| RHD4CZ3C083ST1501 |  | Backfilling and warning tape works for GRP Pipe Line 500 mm - (RD-C-8 /3)-Z3-C083-ST | 3d | 2027-01-20 | 2027-01-23 | RHD4CZ3C083ST1401 | -120d |
|  | 1482 | **RHD4-02-002-C083-(ST)-MH Works - 1200 mm diameter** |  | 2027-01-02 | 2027-03-31 |  |  |
| RHD4CZ3C083ST3100 |  | Excavation and PC Blinding works for MH 1200 mm - (RD-C-8 /3)-Z3-C083-ST | 5d | 2027-01-02 | 2027-01-06 | RHD4ENSDZ3APPST110, RHD4ENMSST2000, RHD4ENMSST2010, RHD4PRSHLDOSST1301 | -168d |
| RHD4CZ3C083ST3200 |  | Installation of Base for MH 1200 mm - (RD-C-8 /3)-Z3-C083-ST | 5d | 2027-01-07 | 2027-01-12 | RHD4PRSHLSTAGST1602, RHD4CZ3C083ST3100 | -168d |
| RHD4CZ3C083ST3300 |  | MH Ring and C.Slab works and Backfilling works for MH 1200 mm - (RD-C-8 /3)-Z3-C083-ST | 5d | 2027-01-13 | 2027-01-18 | RHD4PRSHLDOSST1602, RHD4CZ3C083ST3200 | -168d |
| RHD4CZ3C083ST3400 |  | Steel Cover for MH 1200 mm - (RD-C-8 /3)-Z3-C083-ST | 5d | 2027-03-20 | 2027-03-25 | RHD4PRSHLDOSST1702, RHD4PRSHLSTAGST1702, RHD4CZ3C083ST3300, RHD4CZ3C083ST2500, RHD4CZ3C083ST1500, RHD4CZ3C083RD3100, RHD4CZ3C083ST1501 | -163.02d |

| ID | WBS | Task | Duration | Start | Finish | Predecessors | Total float |
| --- | --- | --- | --- | --- | --- | --- | --- |
| RHD4CZ3C083ST3500 |  | Finishing, Benching, Testing works for MH 1200 mm - (RD-C-8 /3)-Z3-C083-ST | 5d | 2027-03-25 | 2027-03-31 | RHD4CZ3C083ST3400 | -163.02d |
|  | 1466 | **RHD4-02-002-C083-(ST)-GRP Pipes - 400 mm diameter** |  | 2027-01-19 | 2027-01-30 |  |  |
| RHD4CZ3C083ST1100 |  | Excavation works for GRP Pipe Line 400 mm - (RD-C-8 /3)-Z3-C083-ST | 2d | 2027-01-19 | 2027-01-20 | RHD4ENSDZ3APPST110, RHD4CZ3C083ST3300 | -139d |
| RHD4CZ3C083ST1200 |  | Bedding works for GRP Pipe Line 400 mm - (RD-C-8 /3)-Z3-C083-ST | 2d | 2027-01-21 | 2027-01-23 | RHD4CZ3C083ST1100 | -139d |
| RHD4CZ3C083ST1300 |  | Installing for GRP Pipe Line 400 mm - (RD-C-8 /3)-Z3-C083-ST | 2d | 2027-01-24 | 2027-01-25 | RHD4PRSHLSTAGST1002, RHD4CZ3C083ST1200, RHD4PRSHLDOSST1602, RHD4PRSHLPOST1000, RHD4PRSHLDOSST1008 SS, RHD4PRSHLDOSST1608, RHD4PRSHLDOSST1008, RHD4PRSHLDOSST1604, RHD4PRSHLDOSST1004 | -139d |
| RHD4CZ3C083ST1400 |  | Primary Test for GRP Pipe Line 400 mm - (RD-C-8 /3)-Z3-C083-ST | 2d | 2027-01-26 | 2027-01-27 | RHD4CZ3C083ST1300 | -139d |
| RHD4CZ3C083ST1500 |  | Backfilling and warning tape works for GRP Pipe Line 400 mm - (RD-C-8 /3)-Z3-C083-ST | 2d | 2027-01-28 | 2027-01-30 | RHD4CZ3C083ST1400 | -139d |
|  | 1480 | **RHD4-02-002-C083-(ST)-UPVC Pipes - 300 mm diameter** |  | 2027-01-31 | 2027-03-20 |  |  |
| RHD4CZ3C083ST2100 |  | Excavation works for UPVC Pipe Line 300 mm - (RD-C-8 /3)-Z3-C083-ST | 3d | 2027-01-31 | 2027-02-02 | RHD4ENSDZ3APPST110, RHD4PRSHLSTAGSW1001, RHD4CZ3C083ST3300, RHD4CZ3C083ST1500 | -139d |
| RHD4CZ3C083ST2200 |  | Bedding works for UPVC Pipe Line 300 mm - (RD-C-8 /3)-Z3-C083-ST | 2d | 2027-02-03 | 2027-02-04 | RHD4CZ3C083ST2100 | -139d |
| RHD4CZ3C083ST2300 |  | Installing for UPVC Pipe Line 300 mm - (RD-C-8 /3)-Z3-C083-ST | 3d | 2027-02-06 | 2027-02-08 | RHD4PRSHLDOSST1102, RHD4PRSHLSTAGST1102, RHD4CZ3C083ST2200, RHD4CZ3C083ST7300 | -139d |
| RHD4CZ3C083ST2400 |  | Primary Test for UPVC Pipe Line 300 mm - (RD-C-8 /3)-Z3-C083-ST | 2d | 2027-03-14 | 2027-03-16 | RHD4CZ7L015TC3400, RHD4CZ3C083ST2300 | -163.02d |
| RHD4CZ3C083ST2500 |  | Backfilling and warning tape works for UPVC Pipe Line 300 mm - (RD-C-8 /3)-Z3-C083-ST | 3d | 2027-03-16 | 2027-03-20 | RHD4PRSHLSTAGSW1000, RHD4PRSHLSTAGSW1008, RHD4CZ3C083ST2400, RHD4CZ3C083ST6100 | -163.02d |
|  | 1488 | **RHD4-02-002-C083-(ST)-Concrete Encasement** |  | 2027-02-07 | 2027-02-08 |  |  |
| RHD4CZ3C083ST6100 |  | Pipe Encasement for Storm Pipelines - (RD-C-8 /3)-Z3-C083-ST | 2d | 2027-02-07 | 2027-02-08 | RHD4CZ3C083ST2300 SS, RHD4CZ3C083ST2300 FF, RHD4CZ3C083ST2200 | -137d |
|  | 1489 | **RHD4-02-002-Z3-C083-Catch Basin - ST** |  | 2027-01-19 | 2027-04-06 |  |  |
|  | 1490 | **RHD4-02-002-C083-(ST)-Single Catch Basin Works** |  | 2027-01-19 | 2027-04-06 |  |  |
| RHD4CZ3C083ST7100 |  | Excavation works for Single Catch Basin - (RD-C-8 /3)-Z3-C083-ST | 3d | 2027-01-19 | 2027-01-21 | RHD4ENSDZ3APPST110, RHD4CZ3C083ST3300 | -168d |
| RHD4CZ3C083ST7200 |  | PC Blinding, Installation and Pipe connection for Single Catch Basin - (RD-C-8 /3)-Z3-C083-ST | 3d | 2027-01-23 | 2027-01-25 | RHD4CZ3C083ST7100 | -168d |
| RHD4CZ3C083ST7300 |  | Rings & C.Slab & Final Backfill for Single Catch Basin - (RD-C-8 /3)-Z3-C083-ST | 3d | 2027-01-26 | 2027-01-28 | RHD4PRSHLDOSST1302, RHD4PRSHLSTAGST1302, RHD4CZ3C083ST7200 | -168d |
| RHD4CZ3C083ST7400 |  | Steel Cover for Single Catch Basin - (RD-C-8 /3)-Z3-C083-ST | 3d | 2027-03-25 | 2027-03-29 | RHD4PRSHLDOSST1702, RHD4CZ3C083ST7300, RHD4CZ3C083ST2500, RHD4CZ3C083ST3400 | -143.02d |
| RHD4CZ3C083ST7500 |  | Finishing and Insulation works for Single Catch Basin - (RD-C-8 /3)-Z3-C083-ST | 5d | 2027-03-31 | 2027-04-06 | RHD4CZ3C083ST7400, RHD4CZ3C083ST3500 | -145.02d |
|  | 5274 | **RHD4-02-002-C083-(ST)-Double Catch Basin Works** |  | 2027-01-30 | 2027-02-09 |  |  |
| RHD4CZ3C083ST8100 |  | Excavation works for Double Catch Basin - (RD-C-8 /3)-Z3-C083-ST | 2d | 2027-01-30 | 2027-01-31 | RHD4CZ3C083ST7300 | -168d |
| RHD4CZ3C083ST8200 |  | PC Blinding, Installation and Pipe connection for Double Catch Basin - (RD-C-8 /3)-Z3-C083-ST | 2d | 2027-02-01 | 2027-02-02 | RHD4CZ3C083ST8100 | -168d |
| RHD4CZ3C083ST8300 |  | Rings & C.Slab & Final Backfillfor Double Catch Basin - (RD-C-8 /3)-Z3-C083-ST | 2d | 2027-02-03 | 2027-02-04 | RHD4CZ3C083ST8200 | -168d |
| RHD4CZ3C083ST8400 |  | Steel Cover for Double Catch Basin - (RD-C-8 /3)-Z3-C083-ST | 2d | 2027-02-06 | 2027-02-07 | RHD4CZ3C083ST8300 | -168d |
| RHD4CZ3C083ST8500 |  | Finishing and Insulation works for Double Catch Basin - (RD-C-8 /3)-Z3-C083-ST | 2d | 2027-02-08 | 2027-02-09 | RHD4CZ3C083ST8400 | -168d |
|  | 1551 | **RHD4-02-002-Z3-C083-Potable Network - PT** |  | 2027-03-31 | 2027-06-14 |  |  |
|  | 1555 | **RHD4-02-002-C083-(PT)-HDPE Pipes - 400 mm diameter** |  | 2027-03-31 | 2027-05-04 |  |  |
| RHD4CZ3C083PT1103 |  | Excavation works for HDPE Pipline 400 mm - (RD-C-8 /3)-Z3-C083-PT | 6d | 2027-03-31 | 2027-04-07 | RHD4ENSDZ3APPPT130, RHD4ENMSPT2000, RHD4CZ3C083ST1500, RHD4CZ3C083ST2200, RHD4CZ3C083ST3500 | -163.02d |
| RHD4CZ3C083PT1203 |  | Bedding works for HDPE Pipline 400 mm - (RD-C-8 /3)-Z3-C083-PT | 5d | 2027-04-07 | 2027-04-13 | RHD4CZ3C083PT1103 | -163.02d |
| RHD4CZ3C083PT1303 |  | Installing for HDPE Pipline 400 mm - (RD-C-8 /3)-Z3-C083-PT | 8d | 2027-04-13 | 2027-04-22 | RHD4PRSHLDOSPT1000, RHD4PRSHLSTAGPT1000, RHD4CZ3C083PT1203 | -163.02d |
| RHD4CZ3C083PT1403 |  | Primary Test for HDPE Pipline 400 mm - (RD-C-8 /3)-Z3-C083-PT | 4d | 2027-04-22 | 2027-04-27 | RHD4CZ3C083PT1303 | -163.02d |
| RHD4CZ3C083PT1503 |  | Backfilling and warning tape works for HDPE Pipline 400 mm - (RD-C-8 /3)-Z3-C083-PT | 6d | 2027-04-27 | 2027-05-04 | RHD4CZ3C083PT1403 | -163.02d |
|  | 1563 | **RHD4-02-002-C083-(PT)-Air Valves** |  | 2027-05-04 | 2027-05-09 |  |  |
| RHD4CZ3C083PT3103 |  | Installation for Air Valves for Potable Water Network - (RD-C-8 /3)-Z3-C083-PT | 2d | 2027-05-04 | 2027-05-06 | RHD4PRSHLDOSPT1200, RHD4PRSHLSTAGPT1200, RHD4CZ3C083PT2302, RHD4CZ3C083PT1503 | -163.02d |
| RHD4CZ3C083PT3203 |  | Stem and Service box for Air Valves for Potable Water Network - (RD-C-8 /3)-Z3-C083-PT | 2d | 2027-05-06 | 2027-05-09 | RHD4PRSHLDOSPT1300, RHD4PRSHLSTAGPT1300, RHD4CZ3C083PT3103, RHD4CZ3C083PT2402 | -163.02d |
|  | 1564 | **RHD4-02-002-C083-(PT)-Fire Hydrant** |  | 2027-05-09 | 2027-05-31 |  |  |
| RHD4CZ3C083PT4100 |  | Excavation and Bedding and Pipe Installation for Fire Hydrant - (RD-C-8 /3)-Z3-C083-PT | 4d | 2027-05-09 | 2027-05-13 | RHD4ENSDZ3APPPT130, RHD4CZ3C083PT1103 SS, RHD4CZ3C083PT3203 | -163.02d |
| RHD4CZ3C083PT4200 |  | Valve Installation for Fire Hydrant - (RD-C-8 /3)-Z3-C083-PT | 3d | 2027-05-13 | 2027-05-22 | RHD4CZ3C083PT4100 | -163.02d |
| RHD4CZ3C083PT4300 |  | Stem for Fire Hydrant - (RD-C-8 /3)-Z3-C083-PT | 3d | 2027-05-22 | 2027-05-25 | RHD4CZ3C083PT4200 | -163.02d |
| RHD4CZ3C083PT4400 |  | Fire Installation for Fire Hydrant - (RD-C-8 /3)-Z3-C083-PT | 3d | 2027-05-25 | 2027-05-29 | RHD4PRSHLDOSPT1500, RHD4PRSHLSTAGPT1500, RHD4CZ3C083PT4300 | -163.02d |
| RHD4CZ3C083PT4500 |  | Protection Barriers for Fire Hydrant - (RD-C-8 /3)-Z3-C083-PT | 2d | 2027-05-29 | 2027-05-31 | RHD4CZ3C083PT4400 | -163.02d |
|  | 1565 | **RHD4-02-002-C083-(PT)-Concrete Encasement** |  |  |  |  |  |
|  | 1749 | **RHD4-02-002-C083-(PT)-Wash out Valve Chambers** |  | 2027-05-31 | 2027-06-09 |  |  |
| RHD4CZ3C083PT2101 |  | Excavation and Bedding for Wash out Valve Chambers for Potable Water Network - (RD-C-8 /3)-Z3-C083-PT | 2d | 2027-05-31 | 2027-06-02 | RHD4CZ3C083ST3500, RHD4CZ3C083PT4500 | -163.02d |
| RHD4CZ3C083PT2201 |  | PC works for Wash out Valve Chambers for Potable Water Network - (RD-C-8 /3)-Z3-C083-PT | 2d | 2027-06-02 | 2027-06-05 | RHD4CZ3C083PT2101 | -163.02d |
| RHD4CZ3C083PT2301 |  | Installation for Wash out Valve Chambers for Potable Water Network - (RD-C-8 /3)-Z3-C083-PT | 2d | 2027-06-05 | 2027-06-07 | RHD4CZ3C083PT2201 | -163.02d |
| RHD4CZ3C083PT2401 |  | Backfilling works for Wash out Valve Chambers for Potable Water Network - (RD-C-8 /3)-Z3-C083-PT | 2d | 2027-06-07 | 2027-06-09 | RHD4CZ3C083PT2301 | -163.02d |
|  | 1750 | **RHD4-02-002-C083-(PT)-Wash out Valves** |  | 2027-06-09 | 2027-06-14 |  |  |
| RHD4CZ3C083PT3102 |  | Installation for Wash out Valves for Potable Water Network - (RD-C-8 /3)-Z3-C083-PT | 2d | 2027-06-09 | 2027-06-12 | RHD4CZ3C083PT2301, RHD4CZ3C083PT2401 | -163.02d |
| RHD4CZ3C083PT3202 |  | Stem and Service box for Wash out Valves for Potable Water Network - (RD-C-8 /3)-Z3-C083-PT | 2d | 2027-06-12 | 2027-06-14 | RHD4CZ3C083PT3102, RHD4CZ3C083PT2401 | -163.02d |
|  | 1562 | **RHD4-02-002-C083-(PT)-Air Valve Chambers** |  | 2027-04-07 | 2027-04-17 |  |  |
| RHD4CZ3C083PT2102 |  | Excavation and Bedding for Air Valve Chambers for Potable Water Network - (RD-C-8 /3)-Z3-C083-PT | 2d | 2027-04-07 | 2027-04-10 | RHD4ENSDZ3APPPT130, RHD4CZ3C083PT1103 | -146.02d |
| RHD4CZ3C083PT2202 |  | PC works for Air Valve Chambers for Potable Water Network - (RD-C-8 /3)-Z3-C083-PT | 2d | 2027-04-10 | 2027-04-12 | RHD4CZ3C083PT2102 | -146.02d |
| RHD4CZ3C083PT2302 |  | Installation for Air Valve Chambers for Potable Water Network - (RD-C-8 /3)-Z3-C083-PT | 2d | 2027-04-12 | 2027-04-14 | RHD4PRSHLDOSPT1100, RHD4PRSHLDOSPT1400, RHD4PRSHLSTAGPT1100, RHD4PRSHLSTAGPT1400, RHD4CZ3C083PT2202 | -146.02d |
| RHD4CZ3C083PT2402 |  | Backfilling works for Air Valve Chambers for Potable Water Network - (RD-C-8 /3)-Z3-C083-PT | 2d | 2027-04-14 | 2027-04-17 | RHD4CZ3C083PT2302 | -146.02d |
|  | 1536 | **RHD4-02-002-Z3-C083-Crossings Potable Network - PTCr** |  |  |  |  |  |
|  | 1549 | **RHD4-02-002-C083-(PTCr)-Fire Hydrant** |  |  |  |  |  |
|  | 1566 | **RHD4-02-002-Z3-C083-Irrigation Network - IRR** |  | 2027-06-14 | 2027-07-15 |  |  |
|  | 1573 | **RHD4-02-002-C083-(IRR)-HDPE Pipes - 450 mm diameter** |  |  |  |  |  |
|  | 1572 | **RHD4-02-002-C083-(IRR)-HDPE Pipes - 400 mm diameter** |  |  |  |  |  |
|  | 1571 | **RHD4-02-002-C083-(IRR)-HDPE Pipes - 315 mm diameter** |  | 2027-06-14 | 2027-07-15 |  |  |
| RHD4CZ3C083IRR1104 |  | Excavation works for HDPE Pipline 315 mm - (RD-C-8 /3)-Z3-C083-IRR | 5d | 2027-06-14 | 2027-06-20 | RHD4ENSDZ3APPIRR140, RHD4ENMSRR2000, RHD4CZ3C083ST2500, RHD4CZ3C083PT3202 | -163.02d |
| RHD4CZ3C083IRR1204 |  | Bedding works for HDPE Pipline 315 mm - (RD-C-8 /3)-Z3-C083-IRR | 7d | 2027-06-20 | 2027-06-28 | RHD4CZ3C083IRR1104 | -163.02d |
| RHD4CZ3C083IRR1304 |  | Installing for HDPE Pipline 315 mm - (RD-C-8 /3)-Z3-C083-IRR | 7d | 2027-06-28 | 2027-07-06 | RHD4PRSHLDOSIRR1000, RHD4PRSHLSTAGIRR1000, RHD4CZ3C083IRR1204 | -163.02d |
| RHD4CZ3C083IRR1404 |  | Primary Test for HDPE Pipline 315 mm - (RD-C-8 /3)-Z3-C083-IRR | 3d | 2027-07-06 | 2027-07-10 | RHD4CZ3C083IRR1304 | -163.02d |
| RHD4CZ3C083IRR1504 |  | Backfilling and warning tape works for HDPE Pipline 315 mm - (RD-C-8 /3)-Z3-C083-IRR | 5d | 2027-07-10 | 2027-07-15 | RHD4CZ3C083IRR1404 | -163.02d |
|  | 1600 | **RHD4-02-002-Z3-C083-Medium Voltage Network - MV** |  |  |  |  |  |

| ID | WBS | Task | Duration | Start | Finish | Predecessors | Total float |
| --- | --- | --- | --- | --- | --- | --- | --- |
|  | 1601 | **RHD4-02-002-C083-(MV)-Medium Voltage cable trench** |  |  |  |  |  |
|  | 1603 | **RHD4-02-002-C083-(MV)-Medium Voltage cables 3Cx 500 mm²** |  |  |  |  |  |
|  | 1604 | **RHD4-02-002-C083-(MV)-Medium Voltage cables 3Cx 50 mm²** |  |  |  |  |  |
|  | 1606 | **RHD4-02-002-C083-(MV)-Unit Substations** |  |  |  |  |  |
|  | 1607 | **RHD4-02-002-Z3-C083-Low Voltage Network - LV** |  | 2027-07-15 | 2027-08-03 |  |  |
|  | 1610 | **RHD4-02-002-C083-(LV)-Low Voltage cables** |  | 2027-07-15 | 2027-08-03 |  |  |
| RHD4CZ3C083LV3100 |  | Excavation for Low Voltage Cables for Low Voltage Network - (RD-C-8 /3)-Z3-C083-LV | 5d | 2027-07-15 | 2027-07-21 | RHD4ENSDZ3APPLV160, RHD4CZ3C083PT1503, RHD4CZ3C083RD3100, RHD4CZ3C083IRR1504 | -163.02d |
| RHD4CZ3C083LV3200 |  | Cable Laying of Low Voltage Cables for Low Voltage Network - (RD-C-8 /3)-Z3-C083-LV | 4d | 2027-07-21 | 2027-07-26 | RHD4PRSHLDOSLV1100, RHD4ENMSLV2000, RHD4ENMSLV2010, RHD4PRSHLSTAGLV1100, RHD4CZ3C083LV3100 | -142.02d |
| RHD4CZ3C083LV3300 |  | Warning tape and Backfill for Low Voltage Cables for Low Voltage Network - (RD-C-8 /3)-Z3-C083-LV | 4d | 2027-07-26 | 2027-07-31 | RHD4CZ3C083LV3200 | -142.02d |
| RHD4CZ3C083LV3400 |  | Testing of Low Voltage Cables for Low Voltage Network - (RD-C-8 /3)-Z3-C083-LV | 3d | 2027-07-31 | 2027-08-03 | RHD4CZ3C083LV3300 | -142.02d |
|  | 1611 | **RHD4-02-002-C083-(LV)-Low Voltage Distribution Pillars** |  |  |  |  |  |
|  | 1612 | **RHD4-02-002-C083-(LV)-Low Voltage Distribution Pillars Earthing** |  |  |  |  |  |
|  | 1613 | **RHD4-02-002-Z3-C083-Street Lighting Network - SL** |  | 2027-01-19 | 2027-09-19 |  |  |
|  | 1614 | **RHD4-02-002-C083-(SL)-Street Lighting duct banks** |  | 2027-01-19 | 2027-01-27 |  |  |
| RHD4CZ3C083SL2100 |  | Excavation of Duct Banks for Street Lighting Network - (RD-C-8 /3)-Z3-C083-SL | 2d | 2027-01-19 | 2027-01-20 | RHD4ENSDZ3APPSL170, RHD4CZ3C083ST1502 | -136d |
| RHD4CZ3C083SL2200 |  | Installation of Duct Banks for Street Lighting Network - (RD-C-8 /3)-Z3-C083-SL | 2d | 2027-01-21 | 2027-01-23 | RHD4PRSHLDOSSL1000, RHD4PRSHLSTAGSL1000, RHD4CZ3C083SL2100 | -136d |
| RHD4CZ3C083SL2300 |  | Pouring of Duct Banks for Street Lighting Network - (RD-C-8 /3)-Z3-C083-SL | 2d | 2027-01-24 | 2027-01-25 | RHD4CZ3C083SL2200 | -136d |
| RHD4CZ3C083SL2400 |  | Backfilling of Duct Banks for Street Lighting Network - (RD-C-8 /3)-Z3-C083-SL | 2d | 2027-01-26 | 2027-01-27 | RHD4CZ3C083SL2300 | -136d |
|  | 1615 | **RHD4-02-002-C083-(SL)-Street Lighting Drawpit** |  | 2027-08-03 | 2027-08-08 |  |  |
| RHD4CZ3C083SL5100 |  | Excavation of Drawpit size 600x600x900mm for Street Lighting Network - (RD-C-8 /3)-Z3-C083-SL | 2d | 2027-08-03 | 2027-08-05 | RHD4ENSDZ3APPSL170, RHD4CZ3C083SL2300, RHD4CZ3C083LV3400 | -142.02d |
| RHD4CZ3C083SL5200 |  | Installation of Drawpit size 600x600x900mm for Street Lighting Network - (RD-C-8 /3)-Z3-C083-SL | 2d | 2027-08-05 | 2027-08-08 | RHD4PRSHLDOSSL1400, RHD4PRSHLSTAGSL1400, RHD4CZ3C083SL5100 | -142.02d |
|  | 1616 | **RHD4-02-002-C083-(SL)-Street Lighting cables** |  | 2027-08-04 | 2027-09-04 |  |  |
| RHD4CZ3C083SL3100 |  | Excavation for Street Lighting Cables for Street Lighting Network - (RD-C-8 /3)-Z3-C083-SL | 8d | 2027-08-04 | 2027-08-14 | RHD4ENSDZ3APPSL170, RHD4CZ3C083SL1300 | -161.02d |
| RHD4CZ3C083SL3200 |  | Cable Laying of Street Lighting Cables for Street Lighting Network - (RD-C-8 /3)-Z3-C083-SL | 7d | 2027-08-14 | 2027-08-22 | RHD4PRSHLDOSSL1100, RHD4ENMSSL2000, RHD4ENMSSL2010, RHD4PRSHLSTAGSL1100, RHD4CZ3C083SL3100 | -161.02d |
| RHD4CZ3C083SL3300 |  | Warning tape and Backfill for Street Lighting Cables for Street Lighting Network - (RD-C-8 /3)-Z3-C083-SL | 7d | 2027-08-22 | 2027-08-30 | RHD4CZ3C083SL3200 | -161.02d |
| RHD4CZ3C083SL3400 |  | Testing of Street Lighting Cables for Street Lighting Network - (RD-C-8 /3)-Z3-C083-SL | 4d | 2027-08-30 | 2027-09-04 | RHD4CZ3C083SL3300, RHD4CZ3C083SL5200 | -161.02d |
|  | 1617 | **RHD4-02-002-C083-(SL)-Street Lighting Poles** |  | 2027-07-21 | 2027-09-19 |  |  |
| RHD4CZ3C083SL1100 |  | Excavation for RC Base for Lighting Poles for Street Lighting Network - (RD-C-8 /3)-Z3-C083-SL | 4d | 2027-07-21 | 2027-07-26 | RHD4ENSDZ3APPSL170, RHD4CZ3C083SL2400, RHD4CZ3C083PT1503, RHD4CZ3C083IRR1504, RHD4CZ3C083LV3100 | -163.02d |
| RHD4CZ3C083SL1200 |  | Installation for RC Base for Lighting Poles for Street Lighting Network - (RD-C-8 /3)-Z3-C083-SL | 4d | 2027-07-26 | 2027-07-31 | RHD4CZ3C083SL1100 | -161.02d |
| RHD4CZ3C083SL1300 |  | Backfill for RC Base for Lighting Poles for Street Lighting Network - (RD-C-8 /3)-Z3-C083-SL | 4d | 2027-07-31 | 2027-08-04 | RHD4CZ3C083SL1200, RHD4CZ3C083LV3100 | -161.02d |
| RHD4CZ3C083SL1400 |  | Installation for Lighting Poles for Street Lighting Network - (RD-C-8 /3)-Z3-C083-SL | 6d | 2027-09-04 | 2027-09-11 | RHD4PRSHLDOSSL1200, RHD4ENMSSL2000, RHD4ENMSSL2010, RHD4PRSHLSTAGSL1200, RHD4CZ3C083SL1300, RHD4CZ3C083SL3400 | -161.02d |
| RHD4CZ3C083SL1500 |  | Luminaire Installation for Lighting Poles for Street Lighting Network - (RD-C-8 /3)-Z3-C083-SL | 7d | 2027-09-11 | 2027-09-19 | RHD4PRSHLDOSSL1300, RHD4PRSHLSTAGSL1300, RHD4CZ3C083SL1400 | -145.02d |
|  | 1618 | **RHD4-02-002-C083-(SL)-Street Lighting Feeder Pillars** |  | 2027-08-30 | 2027-09-13 |  |  |
| RHD4CZ3C083SL4100 |  | Leveling for Distribution Pillars for Street Lighting Network - (RD-C-8 /3)-Z3-C083-SL | 2d | 2027-08-30 | 2027-09-01 | RHD4CZ3C083SL3300 | -155.02d |
| RHD4CZ3C083SL4200 |  | Lean Concrete for Distribution Pillars for Street Lighting Network - (RD-C-8 /3)-Z3-C083-SL | 2d | 2027-09-01 | 2027-09-04 | RHD4CZ3C083SL4100 | -155.02d |
| RHD4CZ3C083SL4300 |  | Installation of Distribution Pillars for Street Lighting Network - (RD-C-8 /3)-Z3-C083-SL | 2d | 2027-09-11 | 2027-09-13 | RHD4CZ3C083SL4200, RHD4CZ3C083SL1400 | -161.02d |
|  | 1619 | **RHD4-02-002-C083-(SL)-Street Lighting Earthing System** |  | 2027-09-13 | 2027-09-15 |  |  |
| RHD4CZ3C083SL6100 |  | Installation of Earthing for Lighting Poles and Fedder Pillers for Street Lighting Network - (RD-C-8 /3)-Z3-C083-SL | 2d | 2027-09-13 | 2027-09-15 | RHD4ENMSER2000, RHD4ENMSER2010, RHD4CZ3C083SL4300 | -161.02d |
|  | 1625 | **RHD4-02-002-Z3-C083-Telecommunications Network - TC** |  | 2027-09-15 | 2027-10-23 |  |  |
|  | 1626 | **RHD4-02-002-C083-(TC)-Telecommunications Ducts** |  | 2027-09-15 | 2027-10-23 |  |  |
| RHD4CZ3C083TC2100 |  | Excavation of HDPE Ducts for Telecom Network - (RD-C-8 /3)-Z3-C083-TC | 9d | 2027-09-15 | 2027-09-27 | RHD4ENSDZ3APPTC190, RHD4CZ3C083IRR1504, RHD4CZ3C083SL6100 | -158.02d |
| RHD4CZ3C083TC2200 |  | Installation of HDPE Ducts for Telecom Network - (RD-C-8 /3)-Z3-C083-TC | 13d | 2027-09-27 | 2027-10-12 | RHD4PRSHLDOSTC1000, RHD4PRSHLSTAGTC1000, RHD4CZ3C083TC2100 | -158.02d |
| RHD4CZ3C083TC2400 |  | Backfilling of HDPE Ducts for Telecom Network - (RD-C-8 /3)-Z3-C083-TC | 9d | 2027-10-12 | 2027-10-23 | RHD4CZ3C083TC2200, RHD4CZ3C083TC5200, RHD4CZ3L122SL2400 | -158.02d |
|  | 1627 | **RHD4-02-002-C083-(TC)-Telecommunications Manholes** |  | 2027-09-27 | 2027-10-04 |  |  |
| RHD4CZ3C083TC5100 |  | Excavation for Manholes for Telecom Network - (RD-C-8 /3)-Z3-C083-TC | 3d | 2027-09-27 | 2027-09-30 | RHD4ENSDZ3APPTC190, RHD4CZ3C083TC2100, RHD4CZ3C083SL1500 | -151.02d |
| RHD4CZ3C083TC5200 |  | Installation of Manholes for Telecom Network - (RD-C-8 /3)-Z3-C083-TC | 3d | 2027-09-30 | 2027-10-04 | RHD4PRSHLDOSTC1200, RHD4PRSHLSTAGTC1200, RHD4CZ3C083TC5100, RHD4CZ3C083TC2200 SS | -151.02d |
|  | 1629 | **RHD4-02-002-Z3-C083-Information and Communication Technologies - ICT** |  | 2027-09-15 | 2027-10-26 |  |  |
|  | 1630 | **RHD4-02-002-C083-(ICT)-Information and Communication Technologies Ducts** |  | 2027-09-15 | 2027-10-26 |  |  |
| RHD4CZ3C083ICT2100 |  | Excavation of HDPE Ducts for ICT Network - (RD-C-8 /3)-Z3-C083-ICT | 10d | 2027-09-15 | 2027-09-28 | RHD4ENSDZ3APPICT200, RHD4CZ3C083RW3001, RHD4CZ3C083SL6100 | -161.02d |
| RHD4CZ3C083ICT2200 |  | Installation of HDPE Ducts for ICT Network - (RD-C-8 /3)-Z3-C083-ICT | 14d | 2027-09-28 | 2027-10-14 | RHD4PRSHLDOSICT1000, RHD4PRSHLSTAGICT1000, RHD4CZ3C083ICT2100 | -161.02d |
| RHD4CZ3C083ICT2400 |  | Backfilling of HDPE Ducts for ICT Network - (RD-C-8 /3)-Z3-C083-ICT | 10d | 2027-10-14 | 2027-10-26 | RHD4CZ3C083ICT2200, RHD4CZ3C083ICT5200 | -161.02d |
|  | 1631 | **RHD4-02-002-C083-(ICT)-Information and Communication Technologies Manholes** |  | 2027-09-28 | 2027-10-05 |  |  |
| RHD4CZ3C083ICT5100 |  | Excavation for Manholes for ICT Network - (RD-C-8 /3)-Z3-C083-ICT | 3d | 2027-09-28 | 2027-10-02 | RHD4ENSDZ3APPICT200, RHD4CZ3C083ICT2100 | -153.02d |
| RHD4CZ3C083ICT5200 |  | Installation of Manholes for ICT Network - (RD-C-8 /3)-Z3-C083-ICT | 3d | 2027-10-02 | 2027-10-05 | RHD4PRSHLDOSICT1200, RHD4PRSHLSTAGICT1200, RHD4CZ3C083ICT5100 | -153.02d |
|  | 1620 | **RHD4-02-002-Z3-C083-Landscape Network - LS** |  |  |  |  |  |
|  | 1621 | **RHD4-02-002-C083-(LS)-Landscape Lighting cables** |  |  |  |  |  |
|  | 1622 | **RHD4-02-002-C083-(LS)-Landscape Feeder Pillars** |  |  |  |  |  |
|  | 1623 | **RHD4-02-002-C083-(LS)-Landscape Bollard Poles** |  |  |  |  |  |
|  | 1624 | **RHD4-02-002-C083-(LS)-Landscape Feeder Pillars Earthing** |  |  |  |  |  |
|  | 1633 | **RHD4-02-002-Z3-C083-Security Network - CCTV** |  | 2027-10-26 | 2027-12-09 |  |  |
|  | 1634 | **RHD4-02-002-C083-(CCTV)-Civil Works** |  | 2027-10-26 | 2027-11-07 |  |  |
| RHD4CZ3C083CCTV2100 |  | Civil Works for Security Network - (RD-C-8 /3)-Z3-C083-CCTV | 10d | 2027-10-26 | 2027-11-07 | RHD4CZ3C083ICT2400, RHD4CZ3C083TC2400 | -161.02d |
|  | 1635 | **RHD4-02-002-C083-(CCTV)-CCTV Poles** |  | 2027-11-07 | 2027-11-18 |  |  |
| RHD4CZ3C083CCTV1100 |  | Excavation for RC Base for CCTV Poles for Security Network - (RD-C-8 /3)-Z3-C083-CCTV | 2d | 2027-11-07 | 2027-11-09 | RHD4ENSDZ3APPCCTV210, RHD4CZ3C083CCTV2100 | -161.02d |
| RHD4CZ3C083CCTV1200 |  | Installation for RC Base for CCTV Poles for Security Network - (RD-C-8 /3)-Z3-C083-CCTV | 2d | 2027-11-09 | 2027-11-11 | RHD4CZ3C083CCTV1100 | -161.02d |
| RHD4CZ3C083CCTV1300 |  | Backfill for RC Base for CCTV Poles for Security Network - (RD-C-8 /3)-Z3-C083-CCTV | 2d | 2027-11-11 | 2027-11-14 | RHD4CZ3C083CCTV1200 | -161.02d |
| RHD4CZ3C083CCTV1400 |  | Installation for CCTV Poles for Security Network - (RD-C-8 /3)-Z3-C083-CCTV | 2d | 2027-11-14 | 2027-11-16 | RHD4PRSHLDOSCCTV1000, RHD4PRSHLSTACCTV1000, RHD4CZ3C083CCTV1300 | -161.02d |
| RHD4CZ3C083CCTV1500 |  | Protection post Installation for CCTV Poles for Security Network - (RD-C-8 /3)-Z3-C083-CCTV | 2d | 2027-11-16 | 2027-11-18 | RHD4CZ3C083CCTV1400 | -159.02d |
|  | 1636 | **RHD4-02-002-C083-(CCTV)-Camera** |  | 2027-11-18 | 2027-11-21 |  |  |
| RHD4CZ3C083CCTV3100 |  | Installation for Cameras for Security Network - (RD-C-8 /3)-Z3-C083-CCTV | 2d | 2027-11-18 | 2027-11-21 | RHD4PRSHLDOSCCTV1100, RHD4PRSHLSTACCTV1100, RHD4CZ3C083CCTV1400, RHD4CZ3C083CCTV4100 | -161.02d |

| ID | WBS | Task | Duration | Start | Finish | Predecessors | Complete | Total float |
| --- | --- | --- | --- | --- | --- | --- | --- | --- |
|  | 1637 | **RHD4-02-002-C083-(CCTV)-Power and Infrastructure** |  | 2027-11-16 | 2027-11-21 |  |  |  |
| RHD4CZ3C083CCTV4100 |  | Installation of Power outlet, UPS and midspan for PTZ Camerafor Cameras for Security Network - (RD-C-8 /3)-Z3-C083-CCTV | 2d | 2027-11-16 | 2027-11-18 | RHD4PRSHLDOSCCTV1300, RHD4PRSHLSTACCTV1300, RHD4CZ3C083CCTV1400 |  | -161.02d |
| RHD4CZ3C083CCTV4200 |  | Short Range Wireless PoP wireless Bridgefor CCTV Poles for Security Network - (RD-C-8 /3)-Z3-C083-CCTV | 2d | 2027-11-18 | 2027-11-21 | RHD4CZ3C083CCTV4100 |  | -161.02d |
|  | 1639 | **RHD4-02-002-C083-(CCTV)-CCTV Panels and Components** |  | 2027-11-21 | 2027-12-09 |  |  |  |
| RHD4CZ3C083CCTV6100 |  | Installation for CCTV Panels for Security Network - (RD-C-8 /3)-Z3-C083-CCTV | 16d | 2027-11-21 | 2027-12-09 | RHD4PRSHLDOSCCTV1200, RHD4PRSHLSTACCTV1200, RHD4PRLOLSTACCTV1001, RHD4CZ3C083CCTV4200, RHD4CZ3C083CCTV3100, RHD4CZ3C083CCTV1500 |  | -161.02d |
|  | 2028 | **RHD4-02-002-Z3-RA06** |  |  |  |  |  |  |
|  | 2207 | **RHD4-02-002-Z3-RA06-Road Works - RD** |  |  |  |  |  |  |
|  | 2208 | **RHD4-02-002-RA06-(RD)-Subgrade** |  |  |  |  |  |  |
|  | 2209 | **RHD4-02-002-RA06-(RD)-Aggregate Base Course** |  |  |  |  |  |  |
|  | 2210 | **RHD4-02-002-RA06-(RD)-Bituminous base course Two Layers, including (MC1)&(RC2)** |  |  |  |  |  |  |
|  | 2212 | **RHD4-02-002-RA06-(RD)-Precast Concrete Curb** |  |  |  |  |  |  |
|  | 2215 | **RHD4-02-002-RA06-(RD)-Traffic Signage** |  |  |  |  |  |  |
|  | 2213 | **RHD4-02-002-RA06-(RD)-Precast Interlocking Block Pavers** |  |  |  |  |  |  |
|  | 2211 | **RHD4-02-002-RA06-(RD)-Bituminous concrete wearing course including tack coat (RC2)** |  |  |  |  |  |  |
|  | 2214 | **RHD4-02-002-RA06-(RD)-Pavement Marking** |  |  |  |  |  |  |
|  | 2032 | **RHD4-02-002-Z3-RA06-Storm Network - ST** |  |  |  |  |  |  |
|  | 2051 | **RHD4-02-002-RA06-(ST)-MH Works - 2000 mm diameter** |  |  |  |  |  |  |
|  | 2049 | **RHD4-02-002-RA06-(ST)-MH Works - 1200 mm diameter** |  |  |  |  |  |  |
|  | 2050 | **RHD4-02-002-RA06-(ST)-MH Works - 1500 mm diameter** |  |  |  |  |  |  |
|  | 2039 | **RHD4-02-002-RA06-(ST)-GRP Pipes - 1000 mm diameter** |  |  |  |  |  |  |
|  | 2038 | **RHD4-02-002-RA06-(ST)-GRP Pipes - 900 mm diameter** |  |  |  |  |  |  |
|  | 2033 | **RHD4-02-002-RA06-(ST)-GRP Pipes - 400 mm diameter** |  |  |  |  |  |  |
|  | 2048 | **RHD4-02-002-RA06-(ST)-UPVC Pipes - 400 mm diameter** |  |  |  |  |  |  |
|  | 2047 | **RHD4-02-002-RA06-(ST)-UPVC Pipes - 300 mm diameter** |  |  |  |  |  |  |
|  | 2055 | **RHD4-02-002-RA06-(ST)-Concrete Encasement** |  |  |  |  |  |  |
|  | 2056 | **RHD4-02-002-Z3-RA06-Catch Basin - ST** |  |  |  |  |  |  |
|  | 2057 | **RHD4-02-002-RA06-(ST)-Single Catch Basin Works** |  |  |  |  |  |  |
|  | 2058 | **RHD4-02-002-RA06-(ST)-Double Catch Basin Works** |  |  |  |  |  |  |
|  | 2180 | **RHD4-02-002-Z3-RA06-Street Lighting Network - SL** |  |  |  |  |  |  |
|  | 2183 | **RHD4-02-002-RA06-(SL)-Street Lighting cables** |  |  |  |  |  |  |
|  | 2184 | **RHD4-02-002-RA06-(SL)-Street Lighting Poles** |  |  |  |  |  |  |
|  | 2186 | **RHD4-02-002-RA06-(SL)-Street Lighting Earthing System** |  |  |  |  |  |  |
|  | 2187 | **RHD4-02-002-Z3-RA06-Landscape Network - LS** |  |  |  |  |  |  |
|  | 2188 | **RHD4-02-002-RA06-(LS)-Landscape Lighting cables** |  |  |  |  |  |  |
|  | 2189 | **RHD4-02-002-RA06-(LS)-Landscape Feeder Pillars** |  |  |  |  |  |  |
|  | 2190 | **RHD4-02-002-RA06-(LS)-Landscape Bollard Poles** |  |  |  |  |  |  |
|  | 2191 | **RHD4-02-002-RA06-(LS)-Landscape Feeder Pillars Earthing** |  |  |  |  |  |  |
|  | 2200 | **RHD4-02-002-Z3-RA06-Security Network - CCTV** |  |  |  |  |  |  |
|  | 2201 | **RHD4-02-002-RA06-(CCTV)-Civil Works** |  |  |  |  |  |  |
|  | 3 | **Tunnels** |  | 2026-04-19 | 2027-11-10 |  |  |  |
|  | 4 | **Tunnel 01** |  | 2026-04-19 | 2027-11-10 |  |  |  |
|  | 17 | **RHD4-02-002 - Tunnel 1 - Stage 02** |  | 2026-04-19 | 2027-11-10 |  |  |  |
|  | 18 | **RHD4-02-002 - Tunnel 1 - STG 2 - Concrete Works** |  | 2026-04-19 | 2027-01-25 |  |  |  |
|  | 19 | **RHD4-02-002 - Tunnel 1 - Concrete Works - PC Foundation** |  | 2026-04-19 | 2026-06-08 |  |  |  |
| RHD4CTUN1Z5STG21000 |  | PC Footing Shuttering Works -TUN1-Z5-STG2-Concrete Works-PC Foundation | 2d | 2026-04-19 A | 2026-05-24 A | RHD4ENMSTUN2000, RHD4ENMSTUN2010, RHD4CZ5A014RW3000, RHD4PRSHLDOSST1304, RHD4PRSHLDOSST1306 | 100% |  |
| RHD4CTUN1Z5STG21010 |  | Casting of 100mm Blinding Concrete Under Foundation-TUN1-Z5-STG2-Concrete Works-PC Foundation | 2d | 2026-04-21 A | 2026-05-25 A | RHD4CTUN1Z5STG21000 | 100% |  |
| RHD4CTUN1Z5STG21020 |  | Applying 2 layers of waterproofing bitumenous membrane 4mm below footings-TUN1-Z5-STG2-Concrete Works-PC Foundation | 2d | 2026-04-23 A | 2026-06-06 A | RHD4CTUN1Z5STG21010 | 100% |  |
| RHD4CTUN1Z5STG21030 |  | Casting of 50mm Screed for Membrane Protection-TUN1-Z5-STG2-Concrete Works-PC Foundation | 2d | 2026-04-26 A | 2026-06-08 A | RHD4CTUN1Z5STG21020 | 100% |  |
|  | 20 | **RHD4-02-002 - Tunnel 1 - Concrete Works - RC Foundation** |  | 2026-04-28 | 2026-07-20 |  |  |  |
| RHD4CTUN1Z5STG21040 |  | Shuttering Works for RC Footing-TUN1-Z5-STG2-Concrete Works-RC Foundation(Completed) | 27d | 2026-04-28 A | 2026-07-14 A | RHD4CTUN1Z5STG21030, RHD4ENMSTUN2010 | 100% |  |
| RHD4CTUN1Z5STG21050 |  | Steel fixing Works for RC Footing -TUN1-Z5-STG2-Concrete Works-RC Foundation(Completed) | 29d | 2026-04-28 A | 2026-07-12 A | RHD4CTUN1Z5STG21040 SS | 100% |  |
| RHD4CTUN1Z5STG21060 |  | casting of reinforced concrete for RC Footing -TUN1-Z5-STG2-Concrete Works-RC Foundation(Completed) | 23d | 2026-04-28 A | 2026-07-15 A | RHD4ENMARAPPTU100, RHD4CTUN1Z5STG21050 SS | 100% |  |
| RHD4CTUN1Z5STG21070 |  | De-shuttering and Curing Works for RC Footing -TUN1-Z5-STG2-Concrete Works-RC Foundation(Completed) | 25d | 2026-04-28 A | 2026-07-20 A | RHD4CTUN1Z5STG21060 SS | 100% |  |
|  | 21 | **RHD4-02-002 - Tunnel 1 - Concrete Works - Under Ground Walls** |  | 2026-06-04 | 2027-01-07 |  |  |  |
|  | 22 | **RHD4-02-002 - Tunnel 1 - Under Ground Walls - Stage 1 (Up to 3m)** |  | 2026-06-04 | 2026-09-08 |  |  |  |
| RHD4CTUN1Z5STG21080 |  | shuttering Works of Three Sides for Walls <Stage 01>-TUN1-Z5-STG2-Concrete Works-Under Ground Walls | 5d | 2026-06-04 A | 2026-08-09 A | RHD4CTUN1Z5STG21070, RHD4ENMARAPPTU100, RHD4CTUN1Z5STG21060, RHD4CTUN1Z5STG21050, RHD4CTUN1Z5STG21030, RHD4ENMSTUN2010, RHD4CTUN1Z5STG21040 | 100% |  |
| RHD4CTUN1Z5STG21090 |  | Steel fixing Works for Walls <Stage 01>-TUN1-Z5-STG2-Concrete Works-Under Ground Walls | 5d | 2026-06-10 A | 2026-08-15 A | RHD4CTUN1Z5STG21080 | 100% |  |
| RHD4CTUN1Z5STG21100 |  | shuttering Works of the 4th Side for Walls <Stage 01>-TUN1-Z5-STG2-Concrete Works-Under Ground Walls | 4d | 2026-06-16 A | 2026-08-19 A | RHD4CTUN1Z5STG21090 | 100% |  |
| RHD4CTUN1Z5STG21110 |  | casting of reinforced concrete for Walls <Stage 01>-TUN1-Z5-STG2-Concrete Works-Under Ground Walls | 4d | 2026-06-21 A | 2026-08-24 A | RHD4CTUN1Z5STG21100, RHD4ENMARAPPTU100 | 100% |  |
| RHD4CTUN1Z5STG21120 |  | De-shuttering and Curing Works for Walls <Stage 01>-TUN1-Z5-STG2-Concrete Works-Under Ground Walls | 5d | 2026-06-25 A | 2026-09-08 A | RHD4CTUN1Z5STG21110 | 100% |  |
|  | 23 | **RHD4-02-002 - Tunnel 1 - Under Ground Walls - Stage 2 (Up to 6m)** |  | 2026-06-25 | 2026-09-09 |  |  |  |
| RHD4CTUN1Z5STG21130 |  | shuttering Works of Three Sides for Walls <Stage 02>-TUN1-Z5-STG2-Concrete Works-Under Ground Walls | 5d | 2026-06-25 A | 2026-08-09 A | RHD4CTUN1Z5STG21080 SS, RHD4CTUN1Z5STG21110 | 100% |  |
| RHD4CTUN1Z5STG21140 |  | Steel fixing Works for Walls <Stage 02>-TUN1-Z5-STG2-Concrete Works-Under Ground Walls | 5d | 2026-07-01 A | 2026-08-15 A | RHD4CTUN1Z5STG21130 | 100% |  |
| RHD4CTUN1Z5STG21150 |  | shuttering Works of the 4th Side for Walls <Stage 02>-TUN1-Z5-STG2-Concrete Works-Under Ground Walls | 5d | 2026-07-07 A | 2026-08-20 A | RHD4CTUN1Z5STG21140 | 100% |  |
| RHD4CTUN1Z5STG21160 |  | casting of reinforced concrete for Walls <Stage 02>-TUN1-Z5-STG2-Concrete Works-Under Ground Walls | 4d | 2026-07-13 A | 2026-08-25 A | RHD4CTUN1Z5STG21150, RHD4CZ5A014ST3400, RHD4ENMARAPPTU100 | 100% |  |
| RHD4CTUN1Z5STG21170 |  | De-shuttering and Curing Works for Walls <Stage 02>-TUN1-Z5-STG2-Concrete Works-Under Ground Walls | 5d | 2026-07-17 A | 2026-09-09 A | RHD4CTUN1Z5STG21160, RHD4CTUN1Z5STG21120 | 100% |  |
|  | 24 | **RHD4-02-002 - Tunnel 1 - Under Ground Walls - Stage 3 (Up to 9m)** |  | 2026-06-25 | 2027-01-07 |  |  |  |
| RHD4CTUN1Z5STG21180 |  | shuttering Works of Three Sides for Walls <Stage 03>-TUN1-Z5-STG2-Concrete Works-Under Ground Walls | 5d | 2026-06-25 A | 2026-08-09 A | RHD4CTUN1Z5STG21130 SS | 100% |  |
| RHD4CTUN1Z5STG21190 |  | Steel fixing Works for Walls <Stage 03>-TUN1-Z5-STG2-Concrete Works-Under Ground Walls | 5d | 2026-07-01 A | 2026-09-09 A | RHD4CTUN1Z5STG21180 | 100% |  |
| RHD4CTUN1Z5STG21200 |  | shuttering Works of the 4th Side for Walls <Stage 03>-TUN1-Z5-STG2-Concrete Works-Under Ground Walls | 5d | 2026-09-10 A | 2026-09-15 A | RHD4CTUN1Z5STG21190 | 100% |  |

| ID | WBS | Task | Duration | Start | Finish | Predecessors | Complete | Total float |
| --- | --- | --- | --- | --- | --- | --- | --- | --- |
| RHD4CTUN1Z5STG21210 |  | casting of reinforced concrete for Walls <Stage 03>-TUN1-Z5-STG2-Concrete Works-Under Ground Walls | 4d | 2026-09-17 A | 2026-09-21 A | RHD4CTUN1Z5STG21200, RHD4ENMARAPPTU100 | 100% |  |
| RHD4CTUN1Z5STG21220 |  | De-shuttering and Curing Works for Walls <Stage 03>-TUN1-Z5-STG2-Concrete Works-Under Ground Walls | 4d | 2026-09-22 A | 2026-09-27 A | RHD4CTUN1Z5STG21210 | 100% |  |
| RHD4CTUN1Z5STG21230 |  | Installation of 2 layers of bitumenous waterproofing membrane<Stage 03>-TUN1-Z5-STG2-Concrete Works-Under Ground Walls | 4d | 2027-01-02 | 2027-01-05 | RHD4CTUN1Z5STG21220 |  | -135d |
| RHD4CTUN1Z5STG21240 |  | Installation of Protection board for waterproofing <Stage 03>-TUN1-Z5-STG2-Concrete Works-Under Ground Walls | 2d | 2027-01-06 | 2027-01-07 | RHD4CTUN1Z5STG21230 |  | -135d |
|  | 25 | **RHD4-02-002 - Tunnel 1 - Concrete Works - Slab** |  | 2026-09-01 | 2027-01-20 |  |  |  |
| RHD4CTUN1Z5STG21250 |  | shuttering Works for Beams And Slab-TUN1-Z5-STG2-Concrete Works-Slab | 10d | 2026-09-01 A | 2026-10-18 A | RHD4CTUN1Z5STG21240 | 100% |  |
| RHD4CTUN1Z5STG21260 |  | Steel fixing Works for Beams And Slab-TUN1-Z5-STG2-Concrete Works-Slab | 12d | 2026-09-15 A | 2026-10-27 A | RHD4CTUN1Z5STG21250 | 100% |  |
| RHD4CTUN1Z5STG21270 |  | casting of reinforced concrete for Beams And Slab-TUN1-Z5-STG2-Concrete Works-Slab | 8d | 2026-10-05 A | 2026-11-01 A | RHD4CTUN1Z5STG21260, RHD4CTUN1Z5STG21250, RHD4ENMARAPPTU100 | 100% |  |
| RHD4CTUN1Z5STG21280 |  | De-shuttering and Curing Works for Beams And Slab-TUN1-Z5-STG2-Concrete Works-Slab | 26d | 2026-11-01 A | 2027-01-20 | RHD4CTUN1Z5STG21270 | 50% | -128d |
|  | 26 | **RHD4-02-002 - Tunnel 1 - Concrete Works - Concrete Parapet** |  | 2026-11-02 | 2026-11-09 |  |  |  |
| RHD4CTUN1Z5STG21290 |  | shuttering Works for Parapet-TUN1-Z5-STG2-Concrete Works-Concrete Parapet | 2d | 2026-11-02 A | 2026-11-03 A | RHD4CTUN1Z5STG21280 SS, RHD4CTUN1Z5STG21280 | 100% |  |
| RHD4CTUN1Z5STG21300 |  | Steel fixing Works for Parapet-TUN1-Z5-STG2-Concrete Works-Concrete Parapet | 3d | 2026-11-03 A | 2026-11-05 A | RHD4CTUN1Z5STG21290 | 100% |  |
| RHD4CTUN1Z5STG21310 |  | casting of reinforced concrete for Parapet-TUN1-Z5-STG2-Concrete Works-Concrete Parapet | 2d | 2026-11-07 A | 2026-11-08 A | RHD4CTUN1Z5STG21300, RHD4ENMARAPPTU100 | 100% |  |
| RHD4CTUN1Z5STG21320 |  | De-shuttering and Curing Works for Parapet-TUN1-Z5-STG2-Concrete Works-Concrete Parapet | 2d | 2026-11-08 A | 2026-11-09 A | RHD4CTUN1Z5STG21310 | 100% |  |
|  | 27 | **RDH4-01-001 - Tunnel 1 - Painting Works - Finishing** |  | 2027-01-21 | 2027-01-25 |  |  |  |
| RHD4CTUN1Z5STG21900 |  | Tunnel Painting-TUN1-Z5-STG2-Painting Works-Finishing | 5d | 2027-01-21 | 2027-01-25 | RHD4CTUN1Z5STG21280 |  | -97d |
|  | 27 | **RHD4-02-002 - Tunnel 1 - STG 2 - MEP Works** |  | 2027-07-15 | 2027-11-10 |  |  |  |
|  | 28 | **RHD4-02-002 - Tunnel 1 - MEP Works - Electrical Works** |  | 2027-07-15 | 2027-11-10 |  |  |  |
|  | 29 | **RHD4-02-002 - Tunnel 1 - Electrical Works - Low Voltage** |  | 2027-07-15 | 2027-11-10 |  |  |  |
| RHD4CTUN1Z5STG21330 |  | Marking, Cutting & Chasing and Putting LV Conduits in Walls-TUN1-Z5-STG2-MEP Works-Electrical Works | 4d | 2027-07-15 | 2027-07-20 | RHD4CTUN1Z5STG21320, RHD4CZ3C083IRR1504, RHD4CTUN1Z5STG21900 |  | -153.02d |
| RHD4CTUN1Z5STG21340 |  | Hanger & Support Installation for LV System-TUN1-Z5-STG2-MEP Works-Electrical Works | 16d | 2027-07-20 | 2027-08-08 | RHD4CTUN1Z5STG21330 |  | -153.02d |
| RHD4CTUN1Z5STG21350 |  | Cable Tray Installation for LV System-TUN1-Z5-STG2-MEP Works-Electrical Works | 16d | 2027-08-08 | 2027-08-26 | RHD4CTUN1Z5STG21340 |  | -153.02d |
| RHD4CTUN1Z5STG21360 |  | Exposed LV Conduits Installation-TUN1-Z5-STG2-MEP Works-Electrical Works | 16d | 2027-08-26 | 2027-09-14 | RHD4CTUN1Z5STG21350 |  | -142.02d |
| RHD4CTUN1Z5STG21370 |  | Pulling Cables & Wires for LV Systems-TUN1-Z5-STG2-MEP Works-Electrical Works | 16d | 2027-09-14 | 2027-10-04 | RHD4CTUN1Z5STG21360 |  | -142.02d |
| RHD4CTUN1Z5STG21390 |  | Wiring Devices Installation for LV System -TUN1-Z5-STG2-MEP Works-Electrical Works | 16d | 2027-10-04 | 2027-10-23 | RHD4CTUN1Z5STG21370 |  | -142.02d |
| RHD4CTUN1Z5STG21380 |  | Lighting Fixtures Installation-TUN1-Z5-STG2-MEP Works-Electrical Works | 16d | 2027-10-23 | 2027-11-10 | RHD4CTUN1Z5STG21370, RHD4CTUN1Z5STG21390, RHD4CTUN1Z5STG21490, RHD4CTUN1Z5STG11240, RHD4CTUN1Z5STG31240 |  | -136.02d |
|  | 30 | **RHD4-02-002 - Tunnel 1 - Electrical Works - Light Current** |  | 2027-08-26 | 2027-10-13 |  |  |  |
| RHD4CTUN1Z5STG21400 |  | Marking, Cutting & Chasing and Putting LC Conduits-TUN1-Z5-STG2-MEP Works-Electrical Works | 7d | 2027-08-26 | 2027-09-04 | RHD4CTUN1Z5STG21330, RHD4CTUN1Z5STG21350 |  | -153.02d |
| RHD4CTUN1Z5STG21410 |  | Hanger & Support Installation for LC System-TUN1-Z5-STG2-MEP Works-Electrical Works | 7d | 2027-09-04 | 2027-09-12 | RHD4CTUN1Z5STG21400 |  | -153.02d |
| RHD4CTUN1Z5STG21420 |  | Cable Trunk Installation for LC System-TUN1-Z5-STG2-MEP Works-Electrical Works | 7d | 2027-09-12 | 2027-09-20 | RHD4CTUN1Z5STG21410 |  | -153.02d |
| RHD4CTUN1Z5STG21430 |  | Exposed LC Conduits Installation-TUN1-Z5-STG2-MEP Works-Electrical Works | 7d | 2027-09-20 | 2027-09-29 | RHD4CTUN1Z5STG21420 |  | -153.02d |
| RHD4CTUN1Z5STG21440 |  | Pulling Cables for lighting control system (DALI)-TUN1-Z5-STG2-MEP Works-Electrical Works | 3d | 2027-09-29 | 2027-10-03 | RHD4CTUN1Z5STG21430 |  | -153.02d |
| RHD4CTUN1Z5STG21450 |  | Pulling Cables for Fire Alarm System-TUN1-Z5-STG2-MEP Works-Electrical Works | 3d | 2027-09-29 | 2027-10-03 | RHD4CTUN1Z5STG21430 |  | -150.02d |
| RHD4CTUN1Z5STG21460 |  | Pulling Cables for IP CCTV-TUN1-Z5-STG2-MEP Works-Electrical Works | 4d | 2027-09-29 | 2027-10-04 | RHD4CTUN1Z5STG21430 |  | -148.02d |
| RHD4CTUN1Z5STG21470 |  | lighting control system (DALI) Devices Installation -TUN1-Z5-STG2-MEP Works-Electrical Works | 3d | 2027-10-03 | 2027-10-06 | RHD4CTUN1Z5STG21440 |  | -153.02d |
| RHD4CTUN1Z5STG21480 |  | Fire Alarm Devices Installation-TUN1-Z5-STG2-MEP Works-Electrical Works | 3d | 2027-10-06 | 2027-10-10 | RHD4CTUN1Z5STG21450, RHD4CTUN1Z5STG21470 |  | -153.02d |
| RHD4CTUN1Z5STG21490 |  | IP CCTV Devices Installation-TUN1-Z5-STG2-MEP Works-Electrical Works | 3d | 2027-10-10 | 2027-10-13 | RHD4CTUN1Z5STG21460, RHD4CTUN1Z5STG21480 |  | -153.02d |
|  | 31 | **RHD4-02-002 - Tunnel 1 - Stage 03** |  | 2026-08-10 | 2027-04-10 |  |  |  |
|  | 32 | **RHD4-02-002 - Tunnel 1 - STG 3 - Concrete works** |  | 2026-08-10 | 2027-04-10 |  |  |  |
|  | 33 | **RHD4-02-002 - Tunnel 1 - Concrete works - PC Foundation** |  | 2026-08-10 | 2026-09-10 |  |  |  |
| RHD4CTUN1Z5STG31000 |  | PC Footing Shuttering Works -TUN1-Z5-STG3-Concrete works -PC Foundation | 2d | 2026-08-10 A | 2026-08-30 A | RHD4ENMSTUN2000, RHD4ENMSTUN2010, RHD4ENMARAPPTU100, RHD4CTUN1Z5STG21060, RHD4CTUN1Z5STG21050, RHD4CTUN1Z5STG21030, RHD4CTUN1Z5STG21040, RHD4CTUN1Z5STG21250 | 100% |  |
| RHD4CTUN1Z5STG31010 |  | Casting of 100mm Blinding Concrete Under Foundation-TUN1-Z5-STG3-Concrete works -PC Foundation | 2d | 2026-08-12 A | 2026-09-01 A | RHD4CTUN1Z5STG31000 | 100% |  |
| RHD4CTUN1Z5STG31020 |  | Applying 2 layers of waterproofing bitumenous membrane 4mm below footings-TUN1-Z5-STG3-Concrete works -PC Foundation | 3d | 2026-08-15 A | 2026-09-07 A | RHD4CTUN1Z5STG31010 | 100% |  |
| RHD4CTUN1Z5STG31030 |  | Casting of 50mm Screed for Membrane Protection-TUN1-Z5-STG3-Concrete works -PC Foundation | 3d | 2026-08-18 A | 2026-09-10 A | RHD4CTUN1Z5STG31020 | 100% |  |
|  | 34 | **RHD4-02-002 - Tunnel 1 - Concrete works - RC Foundation** |  | 2026-08-22 | 2026-09-22 |  |  |  |
| RHD4CTUN1Z5STG31040 |  | Shuttering Works for RC Footing-TUN1-Z5-STG3-Concrete works -RC Foundation | 5d | 2026-08-22 A | 2026-09-16 A | RHD4CTUN1Z5STG31030, RHD4ENMSTUN2010 | 100% |  |
| RHD4CTUN1Z5STG31050 |  | Steel fixing Works for RC Footing -TUN1-Z5-STG3-Concrete works -RC Foundation | 5d | 2026-08-27 A | 2026-09-20 A | RHD4CTUN1Z5STG31040 | 100% |  |
| RHD4CTUN1Z5STG31060 |  | casting of reinforced concrete for RC Footing -TUN1-Z5-STG3-Concrete works -RC Foundation | 4d | 2026-09-02 A | 2026-09-22 A | RHD4CTUN1Z5STG31050, RHD4ENMARAPPTU100 | 100% |  |
| RHD4CTUN1Z5STG31070 |  | De-shuttering and Curing Works for RC Footing -TUN1-Z5-STG3-Concrete works -RC Foundation | 5d | 2026-09-07 A | 2026-09-12 A | RHD4CTUN1Z5STG31060 | 100% |  |
|  | 35 | **RHD4-02-002 - Tunnel 1 - Concrete works - Under Ground Walls** |  | 2026-09-12 | 2027-04-10 |  |  |  |
|  | 36 | **RHD4-02-002 - Tunnel 1 - Under Ground Walls - Stage 1 (Up to 3m)** |  | 2026-09-12 | 2026-10-07 |  |  |  |
| RHD4CTUN1Z5STG31080 |  | shuttering Works of Three Sides for Walls <Stage 01>-TUN1-Z5-STG3-Concrete works -Under Ground Walls | 5d | 2026-09-12 A | 2026-09-27 A | RHD4CTUN1Z5STG31070 | 100% |  |
| RHD4CTUN1Z5STG31090 |  | Steel fixing Works for Walls <Stage 01>-TUN1-Z5-STG3-Concrete works -Under Ground Walls | 5d | 2026-09-17 A | 2026-10-01 A | RHD4CTUN1Z5STG31080 | 100% |  |
| RHD4CTUN1Z5STG31100 |  | shuttering Works of the 4th Side for Walls <Stage 01>-TUN1-Z5-STG3-Concrete works -Under Ground Walls | 5d | 2026-09-24 A | 2026-10-03 A | RHD4CTUN1Z5STG31090 | 100% |  |
| RHD4CTUN1Z5STG31110 |  | casting of reinforced concrete for Walls <Stage 01>-TUN1-Z5-STG3-Concrete works -Under Ground Walls | 4d | 2026-10-04 A | 2026-10-05 A | RHD4CTUN1Z5STG31100, RHD4ENMARAPPTU100 | 100% |  |
| RHD4CTUN1Z5STG31120 |  | De-shuttering and Curing Works for Walls <Stage 01>-TUN1-Z5-STG3-Concrete works -Under Ground Walls | 4d | 2026-10-06 A | 2026-10-07 A | RHD4CTUN1Z5STG31110, RHD4CTUN1Z5STG31170 | 100% |  |
|  | 37 | **RHD4-02-002 - Tunnel 1 - Under Ground Walls - Stage 2 (Up to 6m)** |  | 2026-09-24 | 2026-10-14 |  |  |  |
| RHD4CTUN1Z5STG31130 |  | shuttering Works of Three Sides for Walls <Stage 02>-TUN1-Z5-STG3-Concrete works -Under Ground Walls | 4d | 2026-09-24 A | 2026-09-28 A | RHD4CTUN1Z5STG31080 SS, RHD4CTUN1Z5STG31110 | 100% |  |
| RHD4CTUN1Z5STG31140 |  | Steel fixing Works for Walls <Stage 02>-TUN1-Z5-STG3-Concrete works -Under Ground Walls | 4d | 2026-09-27 A | 2026-09-30 A | RHD4CTUN1Z5STG31130 | 100% |  |
| RHD4CTUN1Z5STG31150 |  | shuttering Works of the 4th Side for Walls <Stage 02>-TUN1-Z5-STG3-Concrete works -Under Ground Walls | 4d | 2026-10-01 A | 2026-10-05 A | RHD4CTUN1Z5STG31140 | 100% |  |
| RHD4CTUN1Z5STG31160 |  | casting of reinforced concrete for Walls <Stage 02>-TUN1-Z5-STG3-Concrete works -Under Ground Walls | 4d | 2026-10-06 A | 2026-10-10 A | RHD4CTUN1Z5STG31150, RHD4ENMARAPPTU100 | 100% |  |
| RHD4CTUN1Z5STG31170 |  | De-shuttering and Curing Works for Walls <Stage 02>-TUN1-Z5-STG3-Concrete works -Under Ground Walls | 4d | 2026-10-11 A | 2026-10-14 A | RHD4CTUN1Z5STG31160 | 100% |  |
|  | 38 | **RHD4-02-002 - Tunnel 1 - Under Ground Walls - Stage 3 (Up to 9m)** |  | 2026-09-24 | 2027-04-10 |  |  |  |
| RHD4CTUN1Z5STG31180 |  | shuttering Works of Three Sides for Walls <Stage 03>-TUN1-Z5-STG3-Concrete works -Under Ground Walls | 4d | 2026-09-24 A | 2026-09-28 A | RHD4CTUN1Z5STG31130 SS | 100% |  |
| RHD4CTUN1Z5STG31190 |  | Steel fixing Works for Walls <Stage 03>-TUN1-Z5-STG3-Concrete works -Under Ground Walls | 4d | 2026-09-27 A | 2026-09-30 A | RHD4CTUN1Z5STG31180 | 100% |  |
| RHD4CTUN1Z5STG31200 |  | shuttering Works of the 4th Side for Walls <Stage 03>-TUN1-Z5-STG3-Concrete works -Under Ground Walls | 4d | 2026-10-01 A | 2026-10-05 A | RHD4CTUN1Z5STG31190 | 100% |  |
| RHD4CTUN1Z5STG31210 |  | casting of reinforced concrete for Walls <Stage 03>-TUN1-Z5-STG3-Concrete works -Under Ground Walls | 4d | 2026-10-06 A | 2027-01-12 | RHD4CTUN1Z5STG31200, RHD4ENMARAPPTU100 | 90% | -84d |
| RHD4CTUN1Z5STG31220 |  | De-shuttering and Curing Works for Walls <Stage 03>-TUN1-Z5-STG3-Concrete works -Under Ground Walls | 4d | 2026-11-03 A | 2027-01-17 | RHD4CTUN1Z5STG31210 | 70% | -84d |
| RHD4CTUN1Z5STG31230 |  | Installation of 2 layers of 4mm bitumenous waterproofing membrane <Stage 03>-TUN1-Z5-STG3-Concrete works -Under Ground W | 8d | 2026-11-04 A | 2027-03-31 | RHD4CTUN1Z5STG31220, RHD4CTUN1Z5STG31170, RHD4CTUN1Z5STG11170 | 70% | -135d |
| RHD4CTUN1Z5STG31240 |  | Installation of Protection board for waterproofing <Stage 03>-TUN1-Z5-STG3-Concrete works -Under Ground Walls | 8d | 2026-11-07 A | 2027-04-10 | RHD4CTUN1Z5STG31230, RHD4CTUN1Z5STG31120, RHD4CTUN1Z5STG11240, RHD4CTUN1Z5STG21900 | 50% | -135d |

| ID | WBS | Task | Duration | Start | Finish | Predecessors | Complete | Total float |
| --- | --- | --- | --- | --- | --- | --- | --- | --- |
|  | 5 | **RHD4-02-002 - Tunnel 1 - Stage 01** |  | 2026-10-15 | 2027-03-30 |  |  |  |
|  | 6 | **RHD4-02-002 - Tunnel 1 - STG 1 - Concrete Works** |  | 2026-10-15 | 2027-03-30 |  |  |  |
|  | 7 | **RHD4-02-002 - Tunnel 1 - Concrete Works - PC Foundation** |  | 2026-10-15 | 2027-01-17 |  |  |  |
| RHD4CTUN1Z5STG11000 |  | PC Footing Shuttering Works -TUN1-Z5-STG1-Concrete Works-PC Foundation | 2d | 2026-10-15 A | 2027-01-10 | RHD4ENTUN1APPSTC1000, RHD4CZ5L07RW1000, RHD4ENMSTUN2000, RHD4ENMSTUN2010, RHD4ENMARAPPTU100, RHD4CTUN1Z5STG21060, RHD4ENTUN1APPSTC1200, RHD4GNPPSD1100, RHD4ENSDZ6SUBRD220, RHD4ENSDTUN1SUB1200, RHD4ENTUN1APPSTC1100, RHD4ENSDTUN1SUB1100, RHD4CTUN1Z5STG21050, RHD4CTUN1Z5STG21030, RHD4CTUN1Z5STG21040, RHD4CTUN1Z5STG21250 | 50% | -135d |
| RHD4CTUN1Z5STG11010 |  | Casting of 100mm Blinding Concrete Under Foundation-TUN1-Z5-STG1-Concrete Works-PC Foundation | 2d | 2026-10-18 A | 2027-01-12 | RHD4CTUN1Z5STG11000 | 50% | -135d |
| RHD4CTUN1Z5STG11020 |  | Applying 2 layers of waterproofing bitumenous membrane 4mm below footings-TUN1-Z5-STG1-Concrete Works-PC Foundation | 2d | 2026-10-20 A | 2027-01-14 | RHD4CTUN1Z5STG11010 | 50% | -135d |
| RHD4CTUN1Z5STG11030 |  | Casting of 50mm Screed for Membrane Protection-TUN1-Z5-STG1-Concrete Works-PC Foundation | 2d | 2026-10-22 A | 2027-01-17 | RHD4CTUN1Z5STG11020 | 50% | -135d |
|  | 8 | **RHD4-02-002 - Tunnel 1 - Concrete Works - RC Foundation** |  | 2026-10-27 | 2027-02-06 |  |  |  |
| RHD4CTUN1Z5STG11040 |  | Shuttering Works for RC Footing-TUN1-Z5-STG1-Concrete Works-RC Foundation | 4d | 2026-10-27 A | 2027-01-21 | RHD4CTUN1Z5STG11030, RHD4ENTUN1APPSTC1000, RHD4ENMSTUN2000, RHD4ENMSTUN2010, RHD4ENTUN1APPSTC1100, RHD4GNPPSD1100, RHD4ENSDZ6SUBRD220, RHD4ENSDTUN1SUB1100 | 50% | -135d |
| RHD4CTUN1Z5STG11050 |  | Steel fixing Works for RC Footing -TUN1-Z5-STG1-Concrete Works-RC Foundation | 5d | 2026-10-29 A | 2027-01-27 | RHD4CTUN1Z5STG11040, RHD4ENTUN1APPSTC1200, RHD4GNPPSD1100, RHD4ENSDZ6SUBRD220, RHD4ENSDTUN1SUB1200 | 50% | -135d |
| RHD4CTUN1Z5STG11060 |  | casting of reinforced concrete for RC Footing -TUN1-Z5-STG1-Concrete Works-RC Foundation | 4d | 2026-10-31 A | 2027-02-01 | RHD4CTUN1Z5STG11050, RHD4ENMARAPPTU100 | 50% | -135d |
| RHD4CTUN1Z5STG11070 |  | De-shuttering and Curing Works for RC Footing -TUN1-Z5-STG1-Concrete Works-RC Foundation | 5d | 2026-11-01 A | 2027-02-06 | RHD4CTUN1Z5STG11060 | 50% | -159d |
|  | 9 | **RHD4-02-002 - Tunnel 1 - Concrete Works - Under Ground Walls** |  | 2026-11-02 | 2027-03-30 |  |  |  |
|  | 10 | **RHD4-02-002 - Tunnel 1 - Under Ground Walls - Stage 1 (Up to 3m)** |  | 2026-11-02 | 2027-02-24 |  |  |  |
| RHD4CTUN1Z5STG11080 |  | shuttering Works of Three Sides for Walls <Stage 01>-TUN1-Z5-STG1-Concrete Works-Under Ground Walls | 2d | 2026-11-02 A | 2027-02-08 | RHD4CTUN1Z5STG11070, RHD4ENMSTUN2000, RHD4ENMSTUN2010 | 50% | -135d |
| RHD4CTUN1Z5STG11090 |  | Steel fixing Works for Walls <Stage 01>-TUN1-Z5-STG1-Concrete Works-Under Ground Walls | 2d | 2026-11-03 A | 2027-02-10 | RHD4CTUN1Z5STG11080 | 50% | -135d |
| RHD4CTUN1Z5STG11100 |  | shuttering Works of the 4th Side for Walls <Stage 01>-TUN1-Z5-STG1-Concrete Works-Under Ground Walls | 4d | 2026-11-04 A | 2027-02-15 | RHD4CTUN1Z5STG11090 | 50% | -135d |
| RHD4CTUN1Z5STG11110 |  | casting of reinforced concrete for Walls <Stage 01>-TUN1-Z5-STG1-Concrete Works-Under Ground Walls | 4d | 2026-11-07 A | 2027-02-20 | RHD4CTUN1Z5STG11100, RHD4ENMARAPPTU100 | 50% | -135d |
| RHD4CTUN1Z5STG11120 |  | De-shuttering and Curing Works for Walls <Stage 01>-TUN1-Z5-STG1-Concrete Works-Under Ground Walls | 4d | 2027-02-21 | 2027-02-24 | RHD4CTUN1Z5STG11110 |  | -159d |
|  | 11 | **RHD4-02-002 - Tunnel 1 - Under Ground Walls - Stage 2 (Up to 6m)** |  | 2027-02-25 | 2027-03-22 |  |  |  |
| RHD4CTUN1Z5STG11130 |  | shuttering Works of Three Sides for Walls <Stage 02>-TUN1-Z5-STG1-Concrete Works-Under Ground Walls | 4d | 2027-02-25 | 2027-03-01 | RHD4CTUN1Z5STG11080 SS, RHD4CTUN1Z5STG11110, RHD4CTUN1Z5STG11120 |  | -135d |
| RHD4CTUN1Z5STG11140 |  | Steel fixing Works for Walls <Stage 02>-TUN1-Z5-STG1-Concrete Works-Under Ground Walls | 4d | 2027-03-02 | 2027-03-06 | RHD4CTUN1Z5STG11130 |  | -135d |
| RHD4CTUN1Z5STG11150 |  | shuttering Works of the 4th Side for Walls <Stage 02>-TUN1-Z5-STG1-Concrete Works-Under Ground Walls | 4d | 2027-03-07 | 2027-03-14 | RHD4CTUN1Z5STG11140 |  | -135d |
| RHD4CTUN1Z5STG11160 |  | casting of reinforced concrete for Walls <Stage 02>-TUN1-Z5-STG1-Concrete Works-Under Ground Walls | 4d | 2027-03-15 | 2027-03-18 | RHD4CTUN1Z5STG11150, RHD4ENMARAPPTU100 |  | -135d |
| RHD4CTUN1Z5STG11170 |  | De-shuttering and Curing Works for Walls <Stage 02>-TUN1-Z5-STG1-Concrete Works-Under Ground Walls | 4d | 2027-03-19 | 2027-03-22 | RHD4CTUN1Z5STG11160 |  | -162d |
|  | 12 | **RHD4-02-002 - Tunnel 1 - Under Ground Walls - Stage 3 (Up to 9m)** |  | 2027-02-25 | 2027-03-30 |  |  |  |
| RHD4CTUN1Z5STG11180 |  | shuttering Works of Three Sides for Walls <Stage 03>-TUN1-Z5-STG1-Concrete Works-Under Ground Walls | 4d | 2027-02-25 | 2027-03-01 | RHD4CTUN1Z5STG11130 SS |  | -134d |
| RHD4CTUN1Z5STG11190 |  | Steel fixing Works for Walls <Stage 03>-TUN1-Z5-STG1-Concrete Works-Under Ground Walls | 4d | 2027-03-02 | 2027-03-06 | RHD4CTUN1Z5STG11180 |  | -134d |
| RHD4CTUN1Z5STG11200 |  | shuttering Works of the 4th Side for Walls <Stage 03>-TUN1-Z5-STG1-Concrete Works-Under Ground Walls | 4d | 2027-03-07 | 2027-03-14 | RHD4CTUN1Z5STG11190 |  | -134d |
| RHD4CTUN1Z5STG11210 |  | casting of reinforced concrete for Walls <Stage 03>-TUN1-Z5-STG1-Concrete Works-Under Ground Walls | 3d | 2027-03-15 | 2027-03-17 | RHD4CTUN1Z5STG11200, RHD4ENMARAPPTU100 |  | -134d |
| RHD4CTUN1Z5STG11220 |  | De-shuttering and Curing Works for Walls <Stage 03>-TUN1-Z5-STG1-Concrete Works-Under Ground Walls | 4d | 2027-03-18 | 2027-03-21 | RHD4CTUN1Z5STG11210 |  | -161d |
| RHD4CTUN1Z5STG11230 |  | Installation of 2 layers of bitumenous waterproofing membrane<Stage 03>-TUN1-Z5-STG1-Concrete Works-Under Ground Walls | 4d | 2027-03-22 | 2027-03-25 | RHD4CTUN1Z5STG11220 |  | -134d |
| RHD4CTUN1Z5STG11240 |  | Installation of Protection board for waterproofing <Stage 03>-TUN1-Z5-STG1-Concrete Works-Under Ground Walls | 4d | 2027-03-27 | 2027-03-30 | RHD4CTUN1Z5STG11230, RHD4CTUN1Z5STG11120, RHD4CTUN1Z5STG11170 |  | -134d |
|  | 1 | **Stations** |  | 2026-10-20 | 2028-04-30 |  |  |  |
|  | 160 | **Storm Lift Station 01** |  | 2026-10-27 | 2028-04-30 |  |  |  |
|  | 161 | **RHD4-02-002-Storm Lift Station 01-Wet Well Structure And Valve Chamber** |  | 2026-10-27 | 2027-09-06 |  |  |  |
|  | 162 | **RHD4-02-002-STL1-Wet Well** |  | 2026-10-27 | 2027-09-06 |  |  |  |
|  | 163 | **RHD4-02-002-STL1-B07-Concrete works Wet Well** |  | 2026-10-27 | 2027-06-14 |  |  |  |
| RHD4CSTL1B07D021001 |  | Lean Concrete for Plain Concrete for Wet Well - (B7.03 00 00 .01)-STL1-B07-D02 | 6d | 2026-10-27 A | 2026-11-01 A | RHD4CTUN1Z5STG31220, RHD4CTUN1Z5STG11220, RHD4CZ3C083PT4200 | 100% |  |
| RHD4CSTL1B07D021002 |  | Water proofing membrance for Wet well structure - (B7.07 13 13.01)-STL1-B07-D02 | 8d | 2027-05-22 | 2027-05-31 | RHD4CSTL1B07D021001, RHD4PRSHLDOSLFS1200, RHD4PRSHLSTAGLFS1200 |  | -144.02d |
| RHD4CSTL1B07D021003 |  | Screed for Wet well structurefor Wet Well - (B7.03 00 00 .04)-STL1-B07-D02 | 3d | 2027-05-31 | 2027-06-03 | RHD4CSTL1B07D021002, RHD4ENSTL1APPSTC1000 |  | -144.02d |
| RHD4CSTL1B07D021004 |  | Steel Fixing foundations for Wet well structure - (B7.03 00 00 .05)-STL1-B07-D02 | 4d | 2027-06-03 | 2027-06-08 | RHD4CSTL1B07D021003, RHD4ENSTL1APPSTC1000 |  | -144.02d |
| RHD4CSTL1B07D021005 |  | Formwork foundations for Wet well structure - (B7.03 00 00 .05)-STL1-B07-D02 | 2d | 2027-06-08 | 2027-06-10 | RHD4CSTL1B07D021004, RHD4ENSTL1APPSTC1000 |  | -144.02d |
| RHD4CSTL1B07D021006 |  | RC Casting foundations for Wet well structure - (B7.03 00 00 .05)-STL1-B07-D02 | 3d | 2027-06-10 | 2027-06-14 | RHD4CSTL1B07D021005 |  | -144.02d |
|  | 164 | **RHD4-02-002-STL1-B07-Valve Chamber** |  | 2027-06-14 | 2027-07-04 |  |  |  |
| RHD4CSTL1B07D021008 |  | Water proofing membrance for Wet well structure - (B7.07 13 13.01)-STL1-B07-D02 | 4d | 2027-06-14 | 2027-06-19 | RHD4PRSHLDOSLFS1200, RHD4PRSHLSTAGLFS1200, RHD4CSTL1B07D021006 |  | -144.02d |
| RHD4CSTL1B07D021009 |  | Screed for Wet well structure - (B7.03 00 00 .04)-STL1-B07-D02 | 3d | 2027-06-19 | 2027-06-22 | RHD4CSTL1B07D021008, RHD4ENSTL1APPSTC1000 |  | -144.02d |
| RHD4CSTL1B07D021010 |  | Steel Fixing foundations for Wet well structure - (B7.03 00 00 .05)-STL1-B07-D02 | 4d | 2027-06-22 | 2027-06-27 | RHD4CSTL1B07D021009, RHD4ENSTL1APPSTC1000 |  | -144.02d |
| RHD4CSTL1B07D021011 |  | Formwork foundations for Wet well structure - (B7.03 00 00 .05)-STL1-B07-D02 | 4d | 2027-06-27 | 2027-07-01 | RHD4CSTL1B07D021010, RHD4ENSTL1APPSTC1000 |  | -144.02d |
| RHD4CSTL1B07D021012 |  | RC Casting foundations for Wet well structure - (B7.03 00 00 .05)-STL1-B07-D02 | 2d | 2027-07-01 | 2027-07-04 | RHD4CSTL1B07D021011 |  | -144.02d |
|  | 165 | **RHD4-02-002-STL1-B07-Retaining Walls & Slab** |  | 2027-07-04 | 2027-07-24 |  |  |  |
| RHD4CSTL1B07D021013 |  | Steel Fixing for Wet well structure - (B7.03 00 00 .07)-STL1-B07-D02 | 5d | 2027-07-04 | 2027-07-10 | RHD4CSTL1B07D021012, RHD4ENSTL1APPSTC1000 |  | -143.02d |
| RHD4CSTL1B07D021014 |  | Formwork for Wet well structure - (B7.03 00 00 .07)-STL1-B07-D02 | 4d | 2027-07-10 | 2027-07-14 | RHD4CSTL1B07D021013, RHD4ENSTL1APPSTC1000 |  | -143.02d |
| RHD4CSTL1B07D021015 |  | RC Casting for Wet well structure - (B7.03 00 00 .07)-STL1-B07-D02 | 4d | 2027-07-14 | 2027-07-19 | RHD4CSTL1B07D021014, RHD4ENSTL1APPSTC1000 |  | -143.02d |
| RHD4CSTL1B07D021016 |  | Water protection Board membrance for Wet well structure - (B7.07 13 13.02)-STL1-B07-D02 | 4d | 2027-07-19 | 2027-07-24 | RHD4CSTL1B07D021015, RHD4PRSHLDOSLFS1200, RHD4PRSHLSTAGLFS1200 |  | -143.02d |
|  | 166 | **RHD4-02-002-STL1-B07-Finishes** |  | 2027-07-24 | 2027-08-03 |  |  |  |
| RHD4CSTL1B07D091017 |  | Epoxy Coating for Wet well structure - (B7.09 96 56.01)-STL1-B07-D09 | 4d | 2027-07-24 | 2027-07-28 | RHD4CSTL1B07D021016, RHD4PRSHLDOSLFS1600, RHD4PRSHLSTAGLFS1600, RHD4ENSTL1APPARC1100, RHD4GNPPSD1100, RHD4ENSDZ6SUBRD220, RHD4ENSDSTL1SUB2000 |  | -143.02d |
| RHD4CSTL1B07D091018 |  | External Plastering for walls 20mm - (B7.09 24 00.02)-STL1-B07-D09 | 5d | 2027-07-28 | 2027-08-03 | RHD4CSTL1B07D091017, RHD4ENSTL1APPARC1100, RHD4GNPPSD1100, RHD4ENSDZ6SUBRD220, RHD4ENSDSTL1SUB2000 |  | -143.02d |
|  | 167 | **RHD4-02-002-STL1-B07-Metal Doors** |  | 2027-08-03 | 2027-08-09 |  |  |  |
| RHD4CSTL1B07D051022 |  | metal floor door size (1000x1000mm) for Wet well structure - (B7.08 31 13.04)-STL1-B07-D05 | 5d | 2027-08-03 | 2027-08-09 | RHD4PRSHLDOSLFS1400, RHD4PRSHLSTAGLFS1400, RHD4CSTL1B07D091018, RHD4PRSHLDOSLFS1500, RHD4PRSHLSTAGLFS1500, RHD4ENSTL1APPARC1100, RHD4GNPPSD1100, RHD4ENSDZ6SUBRD220, RHD4ENSDSTL1SUB2000 |  | -143.02d |
|  | 168 | **RHD4-02-002-STL1-B07-Screening Container** |  | 2027-08-09 | 2027-08-12 |  |  |  |
| RHD4CSTL1B07D151023 |  | Steel Container Screening Installation - (B7.46 21 00.01)-STL1-B07-D15 | 3d | 2027-08-09 | 2027-08-12 | RHD4CSTL1B07D051022, RHD4PRLOLSTAGLFS1000, RHD4ENSTL1APPMEC1200, RHD4GNPPSD1100, RHD4ENSDZ6SUBRD220, RHD4ENSDSTL1SUB3000 |  | -143.02d |
|  | 169 | **RHD4-02-002-STL1-B07-Motorized basket screen** |  | 2027-08-12 | 2027-09-01 |  |  |  |
| RHD4CSTL1B07D151024 |  | Basket Screen Frame Mounting - (B7.46 21 00.011)-STL1-B07-D15 | 5d | 2027-08-12 | 2027-08-18 | RHD4CSTL1B07D151023, RHD4PRSHLDOSLFS1900, RHD4PRSHLSTAGLFS1900, RHD4ENSTL1APPMEC1200, RHD4GNPPSD1100, RHD4ENSDZ6SUBRD220, RHD4ENSDSTL1SUB3000 |  | -143.02d |
| RHD4CSTL1B07D151025 |  | Basket Screen Alignment - (B7.46 21 00.011)-STL1-B07-D15 | 6d | 2027-08-18 | 2027-08-25 | RHD4CSTL1B07D151024, RHD4PRSHLDOSLFS1900, RHD4PRSHLSTAGLFS1900, RHD4ENSTL1APPMEC1200, RHD4GNPPSD1100, RHD4ENSDZ6SUBRD220, RHD4ENSDSTL1SUB3000 |  | -143.02d |
| RHD4CSTL1B07D151026 |  | Motor and Drive System Installation - (B7.46 21 00.011)-STL1-B07-D15 | 6d | 2027-08-25 | 2027-09-01 | RHD4CSTL1B07D151025, RHD4ENSTL1APPMEC1200, RHD4GNPPSD1100, RHD4ENSDZ6SUBRD220, RHD4ENSDSTL1SUB3000 |  | -143.02d |
|  | 170 | **RHD4-02-002-STL1-B07-Pumps** |  | 2027-09-01 | 2027-09-06 |  |  |  |
| RHD4CSTL1B07D151027 |  | Constant Speed Submersible pump Installation - 20 lps - (B7. 22 14 29.16.03)-STL1-B07-D15 | 4d | 2027-09-01 | 2027-09-06 | RHD4CSTL1B07D151026, RHD4PRLOLSTAGLFS1100, RHD4ENSTL1APPMEC1200, RHD4GNPPSD1100, RHD4ENSDZ6SUBRD220, RHD4ENSDSTL1SUB3000 |  | -143.02d |
|  | 171 | **RHD4-02-002-STL1-B07-Gate Valves** |  | 2027-07-04 | 2027-07-11 |  |  |  |
| RHD4CSTL1B07D151029 |  | Manually operated Gate Valve DN150 for - (B7.22 05 23.03)-STL1-B07-D15 | 6d | 2027-07-04 | 2027-07-11 | RHD4PRSHLDOSLFS1800, RHD4PRSHLSTAGLFS1800, RHD4CSTL1B07D021012, RHD4ENSTL1APPMEC1200, RHD4GNPPSD1100, RHD4ENSDZ6SUBRD220, RHD4ENSDSTL1SUB3000 |  | -144.02d |

| ID | WBS | Task | Duration | Start | Finish | Predecessors | Complete | Total float |
| --- | --- | --- | --- | --- | --- | --- | --- | --- |
|  | 172 | **RHD4-02-002-STL1-B07-Non-Return Valve** |  | 2027-07-11 | 2027-07-18 |  |  |  |
| RHD4CSTL1B07D151030 |  | Check Valve with diameter 150mm. 150mm - (B7.22 05 24.03)-STL1-B07-D15 | 6d | 2027-07-11 | 2027-07-18 | RHD4CSTL1B07D151029, RHD4PRSHLDOSLFS1800, RHD4PRSHLSTAGLFS1800, RHD4ENSTL1APPMEC1200, RHD4GNPPSD1100, RHD4ENSDZ6SUBRD220, RHD4ENSDSTL1SUB3000 |  | -144.02d |
|  | 173 | **RHD4-02-002-STL1-Pump Lifting System** |  | 2027-07-18 | 2027-08-07 |  |  |  |
|  | 174 | **RHD4-02-002-STL1-Ductile Pipes & Fittings** |  | 2027-07-18 | 2027-08-01 |  |  |  |
| RHD4CSTL1B07D151031 |  | Buried ductile iron pipes with diameter 150 mm - (B7.22 11 13.07)-STL1-B07-D15 | 6d | 2027-07-18 | 2027-07-25 | RHD4CSTL1B07D151030, RHD4PRSHLDOSLFS1700, RHD4PRSHLSTAGLFS1700 |  | -144.02d |
| RHD4CSTL1B07D151032 |  | Double flanged ductile iron pipe with diameter 150 mm - (B7.22 11 13.08)-STL1-B07-D15 | 6d | 2027-07-25 | 2027-08-01 | RHD4CSTL1B07D151031 |  | -144.02d |
|  | 175 | **RHD4-02-002-STL1-JIB Crane** |  | 2027-08-01 | 2027-08-07 |  |  |  |
| RHD4CSTL1B07D151033 |  | Install JIB Crane For storm and sewer pumping Stations - (B7.41 22 10.01)-STL1-B07-D15 | 5d | 2027-08-01 | 2027-08-07 | RHD4CSTL1B07D151032, RHD4PRLOLSTAGLFS1500 |  | -144.02d |
|  | 176 | **RHD4-02-002-Storm Lift Station 01-Electrical Room** |  | 2026-10-27 | 2028-04-11 |  |  |  |
|  | 177 | **RHD4-02-002-STL1-Sub Structure** |  | 2026-10-27 | 2027-10-31 |  |  |  |
|  | 178 | **RHD4-02-002-STL1-Plain Concrete** |  | 2026-10-27 | 2027-05-31 |  |  |  |
| RHD4CSTL1B07D031034 |  | Shuttering Plain Concrete - (B7.03 00 00 .01)-STL1-B07-D03 | 4d | 2026-10-27 A | 2026-10-31 A | RHD4CSTL1B07D021001 | 100% |  |
| RHD4CSTL1B07D031035 |  | Lean Concrete Plain Concrete - (B7.03 00 00 .01)-STL1-B07-D03 | 3d | 2026-10-29 A | 2026-11-01 A | RHD4CSTL1B07D031034 | 100% |  |
| RHD4CSTL1B07D031036 |  | Water proofing membrance Plain Concrete - (B7.07 13 13.01)-STL1-B07-D03 | 5d | 2027-05-22 | 2027-05-27 | RHD4CSTL1B07D031035, RHD4PRSHLDOSLFS1200, RHD4PRSHLSTAGLFS1200 |  | -123.02d |
| RHD4CSTL1B07D031037 |  | Screeding Plain Concrete - (B7.03 00 00 .04)-STL1-B07-D03 | 3d | 2027-05-27 | 2027-05-31 | RHD4CSTL1B07D031036 |  | -123.02d |
|  | 179 | **RHD4-02-002-STL1-Footing / Foundation** |  | 2027-05-31 | 2027-06-14 |  |  |  |
| RHD4CSTL1B07D031038 |  | Shuttering Foundation - (B7.03 00 00 .05)-STL1-B07-D03 | 3d | 2027-05-31 | 2027-06-03 | RHD4CSTL1B07D031037, RHD4ENSTL1APPSTC1000 |  | -123.02d |
| RHD4CSTL1B07D031039 |  | Steel Fixing Foundation - (B7.03 00 00 .05)-STL1-B07-D03 | 4d | 2027-06-03 | 2027-06-08 | RHD4CSTL1B07D031038, RHD4ENSTL1APPSTC1000 |  | -123.02d |
| RHD4CSTL1B07D031040 |  | RC Casting Foundation - (B7.03 00 00 .05)-STL1-B07-D03 | 3d | 2027-06-08 | 2027-06-12 | RHD4CSTL1B07D031039, RHD4ENSTL1APPSTC1000 |  | -123.02d |
| RHD4CSTL1B07D031041 |  | Deshuttering Foundation - (B7.03 00 00 .05)-STL1-B07-D03 | 2d | 2027-06-12 | 2027-06-14 | RHD4CSTL1B07D031040 |  | -123.02d |
|  | 180 | **RHD4-02-002-STL1-Neck Columns** |  | 2027-06-14 | 2027-07-03 |  |  |  |
| RHD4CSTL1B07D031042 |  | Steel Fixing Neck Columns - (B7.03 00 00 .06)-STL1-B07-D03 | 4d | 2027-06-14 | 2027-06-19 | RHD4CSTL1B07D031041, RHD4ENSTL1APPSTC1000 |  | -123.02d |
| RHD4CSTL1B07D031043 |  | Shuttering Neck Columns - (B7.03 00 00 .06)-STL1-B07-D03 | 3d | 2027-06-19 | 2027-06-22 | RHD4CSTL1B07D031042, RHD4ENSTL1APPSTC1000 |  | -123.02d |
| RHD4CSTL1B07D031044 |  | RC Casting Neck Columns - (B7.03 00 00 .06)-STL1-B07-D03 | 4d | 2027-06-22 | 2027-06-27 | RHD4CSTL1B07D031043, RHD4ENSTL1APPSTC1000 |  | -123.02d |
| RHD4CSTL1B07D031045 |  | Deshuttering Neck Columns - (B7.03 00 00 .06)-STL1-B07-D03 | 5d | 2027-06-27 | 2027-07-03 | RHD4CSTL1B07D031044 |  | -123.02d |
|  | 181 | **RHD4-02-002-STL1-Ground Beams** |  | 2027-07-03 | 2027-08-12 |  |  |  |
| RHD4CSTL1B07D031046 |  | Steel Fixing Ground Beams - (B7.03 00 00 .08)-STL1-B07-D03 | 5d | 2027-07-03 | 2027-07-08 | RHD4CSTL1B07D031045, RHD4ENSTL1APPSTC1000 |  | -123.02d |
| RHD4CSTL1B07D031047 |  | Shuttering Ground Beams - (B7.03 00 00 .08)-STL1-B07-D03 | 4d | 2027-07-08 | 2027-07-13 | RHD4CSTL1B07D031046, RHD4ENSTL1APPSTC1000 |  | -123.02d |
| RHD4CSTL1B07D031048 |  | RC Casting Ground Beams - (B7.03 00 00 .08)-STL1-B07-D03 | 2d | 2027-08-07 | 2027-08-09 | RHD4CSTL1B07D031047, RHD4ENSTL1APPSTC1000, RHD4CSTL1B07D151033 |  | -144.02d |
| RHD4CSTL1B07D031049 |  | Deshuttering Ground Beams - (B7.03 00 00 .08)-STL1-B07-D03 | 3d | 2027-08-09 | 2027-08-12 | RHD4CSTL1B07D031048 |  | -144.02d |
|  | 182 | **RHD4-02-002-STL1-Aggregate base Course** |  | 2027-08-12 | 2027-08-21 |  |  |  |
| RHD4CSTL1B07D031050 |  | Laying Aggregate base course Slab on Grade - (B7.32 11 23.01)-STL1-B07-D03 | 5d | 2027-08-12 | 2027-08-18 | RHD4CSTL1B07D031049, RHD4ENSTL1APPSTC1000 |  | -144.02d |
| RHD4CSTL1B07D031051 |  | Compaction of aggregate base course Slab on Grade - (B7.32 11 23.01)-STL1-B07-D03 | 2d | 2027-08-18 | 2027-08-21 | RHD4CSTL1B07D031050, RHD4ENSTL1APPSTC1000 |  | -144.02d |
|  | 183 | **RHD4-02-002-STL1-Slab on Grade** |  | 2027-08-21 | 2027-09-09 |  |  |  |
| RHD4CSTL1B07D031052 |  | Screeding for SOG works Slab on Grade - (B7.03 00 00 .02)-STL1-B07-D03 | 4d | 2027-08-21 | 2027-08-25 | RHD4CSTL1B07D031051, RHD4ENSTL1APPSTC1000 |  | -144.02d |
| RHD4CSTL1B07D031053 |  | Shuttering Slab on Grade - (B7.03 00 00 .09)-STL1-B07-D03 | 5d | 2027-08-25 | 2027-08-31 | RHD4CSTL1B07D031052, RHD4ENSTL1APPSTC1000 |  | -144.02d |
| RHD4CSTL1B07D031054 |  | Steel Fixing Slab on Grade - (B7.03 00 00 .09)-STL1-B07-D03 | 3d | 2027-08-31 | 2027-09-04 | RHD4CSTL1B07D031053, RHD4ENSTL1APPSTC1000 |  | -144.02d |
| RHD4CSTL1B07D031055 |  | RC Casting Slab on Grade - (B7.03 00 00 .09)-STL1-B07-D03 | 3d | 2027-09-04 | 2027-09-07 | RHD4CSTL1B07D031054, RHD4ENSTL1APPSTC1000 |  | -144.02d |
| RHD4CSTL1B07D031056 |  | Deshuttering Slab on Grade - (B7.03 00 00 .09)-STL1-B07-D03 | 2d | 2027-09-07 | 2027-09-09 | RHD4CSTL1B07D031055, RHD4CSTL1B07D151027 |  | -144.02d |
|  | 184 | **RHD4-02-002-STL1-Waterproofing** |  | 2027-09-09 | 2027-09-18 |  |  |  |
| RHD4CSTL1B07D071057 |  | 2 coats of bitumen on footings Slab on Grade - (B7.07 14 00.01)-STL1-B07-D07 | 3d | 2027-09-09 | 2027-09-13 | RHD4CSTL1B07D031056, RHD4PRSHLDOSLFS1200, RHD4PRSHLSTAGLFS1200 |  | -144.02d |
| RHD4CSTL1B07D071058 |  | 2 coats of bitumen on Grade Beams and SOW Slab on Grade - (B7.07 14 00.01)-STL1-B07-D07 | 4d | 2027-09-13 | 2027-09-18 | RHD4CSTL1B07D071057, RHD4PRSHLDOSLFS1200, RHD4PRSHLSTAGLFS1200 |  | -144.02d |
|  | 185 | **RHD4-02-002-STL1-Vapor Retarders** |  | 2027-09-18 | 2027-09-22 |  |  |  |
| RHD4CSTL1B07D071059 |  | 250 micron Polyethylene sheet Slab on Grade - (B7.07 26 16.01)-STL1-B07-D07 | 4d | 2027-09-18 | 2027-09-22 | RHD4CSTL1B07D071058, RHD4PRSHLDOSLFS1200, RHD4PRSHLSTAGLFS1200 |  | -144.02d |
|  | 186 | **RHD4-02-002-STL1-Columns** |  | 2027-09-22 | 2027-10-06 |  |  |  |
| RHD4CSTL1B07D031060 |  | Shuttering Columns - (B7.03 00 00 .13)-STL1-B07-D03 | 2d | 2027-09-22 | 2027-09-26 | RHD4CSTL1B07D071059, RHD4ENSTL1APPSTC1000 |  | -144.02d |
| RHD4CSTL1B07D031061 |  | Steel Fixing Columns - (B7.03 00 00 .13)-STL1-B07-D03 | 4d | 2027-09-26 | 2027-09-30 | RHD4CSTL1B07D031060, RHD4ENSTL1APPSTC1000 |  | -144.02d |
| RHD4CSTL1B07D031062 |  | RC Casting Columns - (B7.03 00 00 .13)-STL1-B07-D03 | 2d | 2027-09-30 | 2027-10-03 | RHD4CSTL1B07D031061, RHD4ENSTL1APPSTC1000 |  | -144.02d |
| RHD4CSTL1B07D031063 |  | Deshuttering Columns - (B7.03 00 00 .13)-STL1-B07-D03 | 3d | 2027-10-03 | 2027-10-06 | RHD4CSTL1B07D031062 |  | -144.02d |
|  | 187 | **RHD4-02-002-STL1-Slab Beams** |  | 2027-10-06 | 2027-10-19 |  |  |  |
| RHD4CSTL1B07D031064 |  | Shuttering Roof Slab - (B7.03 00 00 .14)-STL1-B07-D03 | 4d | 2027-10-06 | 2027-10-11 | RHD4CSTL1B07D031063, RHD4ENSTL1APPSTC1000 |  | -144.02d |
| RHD4CSTL1B07D031065 |  | Steel Fixing Roof Slab - (B7.03 00 00 .14)-STL1-B07-D03 | 3d | 2027-10-11 | 2027-10-14 | RHD4CSTL1B07D031064, RHD4ENSTL1APPSTC1000 |  | -144.02d |
| RHD4CSTL1B07D031066 |  | RC Casting Roof Slab - (B7.03 00 00 .14)-STL1-B07-D03 | 2d | 2027-10-14 | 2027-10-17 | RHD4CSTL1B07D031065, RHD4ENSTL1APPSTC1000 |  | -144.02d |
| RHD4CSTL1B07D031067 |  | Deshuttering Roof Slab - (B7.03 00 00 .14)-STL1-B07-D03 | 2d | 2027-10-17 | 2027-10-19 | RHD4CSTL1B07D031066 |  | -144.02d |
|  | 188 | **RHD4-02-002-STL1-Roof Slab** |  | 2027-10-19 | 2027-10-31 |  |  |  |
| RHD4CSTL1B07D031068 |  | Shuttering Roof Slab - (B7.03 00 00 .15)-STL1-B07-D03 | 3d | 2027-10-19 | 2027-10-23 | RHD4CSTL1B07D031067, RHD4ENSTL1APPSTC1000 |  | -144.02d |
| RHD4CSTL1B07D031069 |  | Steel Fixing Roof Slab - (B7.03 00 00 .15)-STL1-B07-D03 | 3d | 2027-10-23 | 2027-10-26 | RHD4CSTL1B07D031068, RHD4ENSTL1APPSTC1000 |  | -144.02d |
| RHD4CSTL1B07D031070 |  | RC Casting Roof Slab - (B7.03 00 00 .15)-STL1-B07-D03 | 2d | 2027-10-26 | 2027-10-28 | RHD4CSTL1B07D031069, RHD4ENSTL1APPSTC1000 |  | -144.02d |
| RHD4CSTL1B07D031071 |  | Deshuttering Roof Slab - (B7.03 00 00 .15)-STL1-B07-D03 | 2d | 2027-10-28 | 2027-10-31 | RHD4CSTL1B07D031070 |  | -144.02d |
|  | 189 | **RHD4-02-002-STL1-Electrical Room-Finishes** |  | 2027-10-31 | 2027-12-13 |  |  |  |
|  | 190 | **RHD4-02-002-STL1-Masonary** |  | 2027-10-31 | 2027-11-03 |  |  |  |
| RHD4CSTL1B07D091072 |  | Masonary Block work (CMU walls) Insulated Block Work - (B7.04 22 00.01)-STL1-B07-D09 | 3d | 2027-10-31 | 2027-11-03 | RHD4CSTL1B07D031071, RHD4CSTL1B07D151033, RHD4ENSTL1APPARC1100, RHD4GNPPSD1100, RHD4ENSDZ6SUBRD220, RHD4ENSDSTL1SUB2000 |  | -144.02d |
|  | 191 | **RHD4-02-002-STL1-Roofs waterproofing system** |  | 2027-11-03 | 2027-11-20 |  |  |  |
| RHD4CSTL1B07D071073 |  | 250 micron Polyethylene sheet - (B7.07 00 00.06)-STL1-B07-D07 | 2d | 2027-11-03 | 2027-11-06 | RHD4CSTL1B07D091072, RHD4PRSHLDOSLFS1200, RHD4PRSHLDOSLFS1100, RHD4PRSHLSTAGLFS1200, RHD4PRSHLSTAGLFS1100, RHD4ENSTL1APPARC1100, RHD4GNPPSD1100, RHD4ENSDZ6SUBRD220, RHD4ENSDSTL1SUB2000 |  | -123.02d |
| RHD4CSTL1B07D071074 |  | 50 mm thick minimum Foam Concrete - (B7.07 00 00.05)-STL1-B07-D07 | 3d | 2027-11-06 | 2027-11-09 | RHD4CSTL1B07D071073, RHD4PRSHLDOSLFS1100, RHD4PRSHLSTAGLFS1100, RHD4ENSTL1APPARC1100, RHD4GNPPSD1100, RHD4ENSDZ6SUBRD220, RHD4ENSDSTL1SUB2000 |  | -123.02d |
| RHD4CSTL1B07D071075 |  | 30 mm thick Screed Concrete - (B7.07 00 00.04)-STL1-B07-D07 | 3d | 2027-11-06 | 2027-11-09 | RHD4CSTL1B07D071074 SS, RHD4PRSHLDOSLFS1100, RHD4PRSHLSTAGLFS1100, RHD4ENSTL1APPARC1100, RHD4GNPPSD1100, RHD4ENSDZ6SUBRD220, RHD4ENSDSTL1SUB2000 |  | -123.02d |
| RHD4CSTL1B07D071076 |  | 4 mm thick Waterproofing Bituminous Membrane - (B7.07 00 00.03)-STL1-B07-D07 | 2d | 2027-11-09 | 2027-11-11 | RHD4CSTL1B07D071075, RHD4PRSHLDOSLFS1200, RHD4PRSHLDOSLFS1100, RHD4PRSHLSTAGLFS1200, RHD4PRSHLSTAGLFS1100, RHD4ENSTL1APPARC1100, RHD4GNPPSD1100, RHD4ENSDZ6SUBRD220, RHD4ENSDSTL1SUB2000 |  | -123.02d |
| RHD4CSTL1B07D071077 |  | Geotextile Membrane - (B7.07 00 00.02)-STL1-B07-D07 | 4d | 2027-11-11 | 2027-11-16 | RHD4CSTL1B07D071076, RHD4PRSHLDOSLFS1100, RHD4PRSHLSTAGLFS1100, RHD4CSTL1B07D071074, RHD4ENSTL1APPARC1100, RHD4GNPPSD1100, RHD4ENSDZ6SUBRD220, RHD4ENSDSTL1SUB2000 |  | -123.02d |
| RHD4CSTL1B07D071078 |  | 50 mm thick Gravel Toppings - (B7.07 00 00.01)-STL1-B07-D07 | 3d | 2027-11-16 | 2027-11-20 | RHD4CSTL1B07D071077, RHD4PRSHLDOSLFS1100, RHD4PRSHLSTAGLFS1100, RHD4ENSTL1APPARC1100, RHD4GNPPSD1100, RHD4ENSDZ6SUBRD220, RHD4ENSDSTL1SUB2000 |  | -123.02d |
|  | 192 | **RHD4-02-002-STL1-Stone Copings** |  | 2027-11-20 | 2027-11-22 |  |  |  |

| ID | WBS | Task | Duration | Start | Finish | Predecessors | Total float |
| --- | --- | --- | --- | --- | --- | --- | --- |
| RHD4CSTL1B07D091079 |  | Supply and install Stone coping 40mm thickness Insulated Block Work - (B7.07 71 13.01)-STL1-B07-D09 | 2d | 2027-11-20 | 2027-11-22 | RHD4CSTL1B07D071078, RHD4ENSTL1APPARC1100, RHD4GNPPSD1100, RHD4ENSDZ6SUBRD220, RHD4ENSDSTL1SUB2000 | -123.02d |
|  | 193 | **RHD4-02-002-STL1-Doors & Windows** |  |  |  |  |  |
|  | 194 | **RHD4-02-002-STL1-Cement Plastering** |  | 2027-11-22 | 2027-11-27 |  |  |
| RHD4CSTL1B07D091081 |  | Internal Plastering For Walls 15mm - (B7.09 24 00.01)-STL1-B07-D09 | 4d | 2027-11-22 | 2027-11-27 | RHD4CSTL1B07D091079, RHD4ENSTL1APPARC1100, RHD4GNPPSD1100, RHD4ENSDZ6SUBRD220, RHD4ENSDSTL1SUB2000 | -123.02d |
| RHD4CSTL1B07D091082 |  | External Plastering for walls 20mm - (B7.09 24 00.02)-STL1-B07-D09 | 3d | 2027-11-22 | 2027-11-25 | RHD4CSTL1B07D091081 SS, RHD4ENSTL1APPARC1100, RHD4GNPPSD1100, RHD4ENSDZ6SUBRD220, RHD4ENSDSTL1SUB2000 | -123.02d |
|  | 195 | **RHD4-02-002-STL1-Metal Ladders** |  | 2027-11-25 | 2027-12-01 |  |  |
| RHD4CSTL1B07D051085 |  | With cage, Length 3.6m - (B7.05 51 33.10)-STL1-B07-D05 | 5d | 2027-11-25 | 2027-12-01 | RHD4CSTL1B07D091082, RHD4PRSHLDOSLFS1000, RHD4PRSHLSTAGLFS1000, RHD4ENSTL1APPARC1100, RHD4GNPPSD1100, RHD4ENSDZ6SUBRD220, RHD4ENSDSTL1SUB2000 | -123.02d |
|  | 196 | **RHD4-02-002-STL1-Painting** |  | 2027-12-01 | 2027-12-07 |  |  |
| RHD4CSTL1B07D091087 |  | Internal Acrylic Paint For Walls Acrylic Paint - (B7.09 91 00.01)-STL1-B07-D09 | 5d | 2027-12-01 | 2027-12-07 | RHD4PRSHLDOSLFS1500, RHD4PRSHLSTAGLFS1500, RHD4CSTL1B07D051085, RHD4ENSTL1APPARC1100, RHD4GNPPSD1100, RHD4ENSDZ6SUBRD220, RHD4ENSDSTL1SUB2000 | -123.02d |
| RHD4CSTL1B07D091088 |  | External Acrylic Paint for walls Acrylic Paint - (B7.09 91 00.02)-STL1-B07-D09 | 5d | 2027-12-01 | 2027-12-07 | RHD4CSTL1B07D091087 SS, RHD4PRSHLDOSLFS1500, RHD4PRSHLSTAGLFS1500, RHD4ENSTL1APPARC1100, RHD4GNPPSD1100, RHD4ENSDZ6SUBRD220, RHD4ENSDSTL1SUB2000 | -123.02d |
|  | 197 | **RHD4-02-002-STL1-Epoxy Coating** |  | 2027-12-07 | 2027-12-13 |  |  |
| RHD4CSTL1B07D091090 |  | Internal Acrylic Paint For Walls Acrylic Paint - (B7.09 96 56.01)-STL1-B07-D09 | 5d | 2027-12-07 | 2027-12-13 | RHD4PRSHLDOSLFS1500, RHD4PRSHLSTAGLFS1500, RHD4CSTL1B07D091088, RHD4ENSTL1APPARC1100, RHD4GNPPSD1100, RHD4ENSDZ6SUBRD220, RHD4ENSDSTL1SUB2000 | -123.02d |
|  | 198 | **RHD4-02-002-STL1-Mechanical Works** |  | 2027-10-28 | 2027-12-26 |  |  |
|  | 199 | **RHD4-02-002-STL1-Wall mounted Split/AC** |  | 2027-10-28 | 2027-11-20 |  |  |
| RHD4CSTL1B07D151091 |  | Wall mounted Split Air Conditioning Unit. FCU-01 Installation 3.6 kw - (B7.23 81 26.01)-STL1-B07-D15 | 10d | 2027-10-28 | 2027-11-09 | RHD4CSTL1B07D031071 SS, RHD4PRSHLDOSLFS2200, RHD4PRSHLSTAGLFS2200, RHD4ENSTL1APPMEC1200, RHD4GNPPSD1100, RHD4ENSDZ6SUBRD220, RHD4ENSDSTL1SUB3000 | -139.02d |
| RHD4CSTL1B07D151092 |  | Wall mounted Split Air Conditioning Unit. FCU-01 Installation 3.6 kw - (B7.23 81 26.01)-STL1-B07-D15 | 9d | 2027-11-09 | 2027-11-20 | RHD4CSTL1B07D151091, RHD4PRSHLDOSLFS2200, RHD4PRSHLSTAGLFS2200, RHD4ENSTL1APPMEC1200, RHD4GNPPSD1100, RHD4ENSDZ6SUBRD220, RHD4ENSDSTL1SUB3000 | -139.02d |
|  | 200 | **RHD4-02-002-STL1-Portable Fire Extinguishers** |  | 2027-11-20 | 2027-12-09 |  |  |
| RHD4CSTL1B07D151093 |  | Powder fire extinguishers installation - (B7.21 20 00.01)-STL1-B07-D15 | 8d | 2027-11-20 | 2027-11-29 | RHD4CSTL1B07D151092, RHD4ENSTL1APPMEC1200, RHD4GNPPSD1100, RHD4ENSDZ6SUBRD220, RHD4ENSDSTL1SUB3000 | -139.02d |
| RHD4CSTL1B07D151094 |  | CO2 fire extinguishers installation - (B7.21 20 00.02)-STL1-B07-D15 | 9d | 2027-11-29 | 2027-12-09 | RHD4CSTL1B07D151093, RHD4ENSTL1APPMEC1200, RHD4GNPPSD1100, RHD4ENSDZ6SUBRD220, RHD4ENSDSTL1SUB3000 | -139.02d |
|  | 201 | **RHD4-02-002-STL1-Scupper** |  | 2027-12-09 | 2027-12-18 |  |  |
| RHD4CSTL1B07D151095 |  | Scupper with diameter 110mm - Installation - (B7.22 13 19.13.01)-STL1-B07-D15 | 7d | 2027-12-09 | 2027-12-18 | RHD4CSTL1B07D151094, RHD4ENSTL1APPMEC1200, RHD4GNPPSD1100, RHD4ENSDZ6SUBRD220, RHD4ENSDSTL1SUB3000 | -139.02d |
|  | 202 | **RHD4-02-002-STL1-Pipes, Fittings & Appurtenances** |  | 2027-12-18 | 2027-12-26 |  |  |
| RHD4CSTL1B07D151096 |  | uPVC pipes with diameter 25mm. Roof Slab - (B7.22 13 16.02)-STL1-B07-D15 | 7d | 2027-12-18 | 2027-12-26 | RHD4CSTL1B07D151095, RHD4PRSHLDOSLFS2100, RHD4PRSHLSTAGLFS2100, RHD4ENSTL1APPMEC1200, RHD4GNPPSD1100, RHD4ENSDZ6SUBRD220, RHD4ENSDSTL1SUB3000 | -139.02d |
|  | 203 | **RHD4-02-002-STL1-Electrical Works** |  | 2027-10-31 | 2028-04-11 |  |  |
|  | 204 | **RHD4-02-002-STL1-4Cx 6mm2 + 1Cx6mm2 Cu/XLPE/PVC** |  | 2027-10-31 | 2027-11-15 |  |  |
| RHD4CSTL1B07D161097 |  | Electrical Conduits and Pull Box Installation for LV Cables 4Cx mm²- (B7.26 05 19.03)-STL1-B07-D16 | 2d | 2027-10-31 | 2027-11-02 | RHD4CSTL1B07D091072 SS, RHD4ENSTL1APPELE1300 | -144.02d |
| RHD4CSTL1B07D161098 |  | Cable Tray Installation for LV Cables 4Cx mm²- (B7.26 05 19.03)-STL1-B07-D16 | 3d | 2027-11-02 | 2027-11-06 | RHD4CSTL1B07D161097, RHD4ENSTL1APPELE1300 | -144.02d |
| RHD4CSTL1B07D161099 |  | LV Cable Pulling for LV Cables 4Cx mm²- (B7.26 05 19.03)-STL1-B07-D16 | 4d | 2027-11-06 | 2027-11-10 | RHD4CSTL1B07D161098, RHD4PRSHLDOSLFS2600, RHD4PRSHLSTAGLFS2600 | -144.02d |
| RHD4CSTL1B07D161100 |  | LV Cable Termination for LV Cables 4Cx mm²- (B7.26 05 19.03)-STL1-B07-D16 | 4d | 2027-11-10 | 2027-11-15 | RHD4CSTL1B07D161099 | -144.02d |
|  | 205 | **RHD4-02-002-STL1-4Cx 95mm2 + 1Cx50mm2 Cu/XLPE/PVC** |  | 2027-11-10 | 2027-11-29 |  |  |
| RHD4CSTL1B07D161101 |  | Electrical Conduits and Pull Box Installation for LV Cables 4Cx95 mm²- (B7.26 05 19.05)-STL1-B07-D16 | 5d | 2027-11-10 | 2027-11-16 | RHD4CSTL1B07D161100 SS, RHD4ENSTL1APPELE1300 | -144.02d |
| RHD4CSTL1B07D161102 |  | Cable Tray Installation for LV Cables 4Cx95 mm²- (B7.26 05 19.05)-STL1-B07-D16 | 4d | 2027-11-16 | 2027-11-21 | RHD4CSTL1B07D161101, RHD4ENSTL1APPELE1300 | -144.02d |
| RHD4CSTL1B07D161103 |  | LV Cable Pulling for LV Cables 4Cx95 mm²- (B7.26 05 19.05)-STL1-B07-D16 | 3d | 2027-11-21 | 2027-11-24 | RHD4CSTL1B07D161102, RHD4PRSHLDOSLFS2600, RHD4PRSHLSTAGLFS2600 | -144.02d |
| RHD4CSTL1B07D161104 |  | LV Cable Termination for LV Cables 4Cx95 mm²- (B7.26 05 19.05)-STL1-B07-D16 | 4d | 2027-11-24 | 2027-11-29 | RHD4CSTL1B07D161103 | -144.02d |
|  | 206 | **RHD4-02-002-STL1-4Cx 50mm2 + 1Cx25mm2 CU/XLPE / SWA / PVC** |  | 2027-11-24 | 2027-12-12 |  |  |
| RHD4CSTL1B07D161105 |  | Electrical Conduits and Pull Box Installation for LV Cables 4Cx6 mm²- (B7.26 05 19.06)-STL1-B07-D16 | 5d | 2027-11-24 | 2027-11-30 | RHD4CSTL1B07D161104 SS, RHD4ENSTL1APPELE1300 | -144.02d |
| RHD4CSTL1B07D161106 |  | Cable Tray Installation for LV Cables 4Cx6 mm²- (B7.26 05 19.06)-STL1-B07-D16 | 3d | 2027-11-30 | 2027-12-04 | RHD4CSTL1B07D161105, RHD4ENSTL1APPELE1300 | -144.02d |
| RHD4CSTL1B07D161107 |  | LV Cable Pulling for LV Cables 4Cx6 mm²- (B7.26 05 19.06)-STL1-B07-D16 | 4d | 2027-12-04 | 2027-12-08 | RHD4CSTL1B07D161106, RHD4PRSHLDOSLFS2600, RHD4PRSHLSTAGLFS2600 | -144.02d |
| RHD4CSTL1B07D161108 |  | LV Cable Termination for LV Cables 4Cx6 mm²- (B7.26 05 19.06)-STL1-B07-D16 | 3d | 2027-12-08 | 2027-12-12 | RHD4CSTL1B07D161107 | -144.02d |
|  | 207 | **RHD4-02-002-STL1-4Cx 4mm2 + 1Cx4mm2 Cu/XLPE/PVC** |  | 2027-12-08 | 2027-12-25 |  |  |
| RHD4CSTL1B07D161109 |  | Electrical Conduits and Pull Box Installation for LV Cables 4Cx4 mm²- (B7.26 05 19.07)-STL1-B07-D16 | 3d | 2027-12-08 | 2027-12-12 | RHD4CSTL1B07D161108 SS, RHD4ENSTL1APPELE1300 | -144.02d |
| RHD4CSTL1B07D161110 |  | Cable Tray Installation for LV Cables 4Cx4 mm²- (B7.26 05 19.07)-STL1-B07-D16 | 4d | 2027-12-12 | 2027-12-16 | RHD4CSTL1B07D161109, RHD4ENSTL1APPELE1300 | -144.02d |
| RHD4CSTL1B07D161111 |  | LV Cable Pulling for LV Cables 4Cx4 mm²- (B7.26 05 19.07)-STL1-B07-D16 | 3d | 2027-12-16 | 2027-12-20 | RHD4CSTL1B07D161110, RHD4PRSHLDOSLFS2600, RHD4PRSHLSTAGLFS2600 | -144.02d |
| RHD4CSTL1B07D161112 |  | LV Cable Termination for LV Cables 4Cx4 mm²- (B7.26 05 19.07)-STL1-B07-D16 | 4d | 2027-12-20 | 2027-12-25 | RHD4CSTL1B07D161111 | -144.02d |
|  | 208 | **RHD4-02-002-STL1-Wiring Devices** |  | 2027-12-20 | 2028-01-02 |  |  |
| RHD4CSTL1B07D161113 |  | 13A Signle Socket Outlet WP for Wiring Devices - (B7.26 27 26 .01)-STL1-B07-D16 | 4d | 2027-12-20 | 2027-12-25 | RHD4CSTL1B07D161112 SS, RHD4ENSTL1APPELE1300, RHD4PRSHLDOSLFS2800, RHD4PRSHLSTAGLFS2800 | -144.02d |
| RHD4CSTL1B07D161114 |  | 13A Double Socket Outlet WP for Wiring Devices - (B7.26 27 26 .02)-STL1-B07-D16 | 3d | 2027-12-25 | 2027-12-28 | RHD4CSTL1B07D161113, RHD4ENSTL1APPELE1300, RHD4PRSHLDOSLFS2800, RHD4PRSHLSTAGLFS2800 | -144.02d |
| RHD4CSTL1B07D161115 |  | 25A Switch Socket Outlet (for Split Unit), WP for Wiring Devices - (B7.26 27 26 .03)-STL1-B07-D16 | 4d | 2027-12-28 | 2028-01-02 | RHD4CSTL1B07D161114, RHD4ENSTL1APPELE1300, RHD4PRSHLDOSLFS2800, RHD4PRSHLSTAGLFS2800 | -144.02d |
|  | 209 | **RHD4-02-002-STL1-Grounding and Bonding** |  | 2027-12-28 | 2028-01-17 |  |  |
| RHD4CSTL1B07D161116 |  | Copper Conductor Connecting to Steel Rebar Installation for Copper Rods - (B7.26 05 26.03)-STL1-B07-D16 | 4d | 2027-12-28 | 2028-01-02 | RHD4CSTL1B07D161115 SS, RHD4ENSTL1APPELE1300, RHD4PRSHLDOSLFS2500, RHD4PRSHLSTAGLFS2500 | -144.02d |
| RHD4CSTL1B07D161117 |  | Earth pits Installation for Copper Rods - (B7.26 05 26.03)-STL1-B07-D16 | 5d | 2028-01-02 | 2028-01-08 | RHD4CSTL1B07D161116, RHD4ENSTL1APPELE1300 | -144.02d |
| RHD4CSTL1B07D161118 |  | Earth Bars Installation for Copper Rods - (B7.26 05 26.03)-STL1-B07-D16 | 4d | 2028-01-08 | 2028-01-12 | RHD4CSTL1B07D161117, RHD4ENSTL1APPELE1300 | -144.02d |
| RHD4CSTL1B07D161119 |  | Copper Tape on Roof Installation for Copper Rods - (B7.26 05 26.03)-STL1-B07-D16 | 4d | 2028-01-12 | 2028-01-17 | RHD4CSTL1B07D161118, RHD4ENSTL1APPELE1300 | -144.02d |
|  | 210 | **RHD4-02-002-STL1-Indoor Lighting Fixtures** |  | 2028-01-12 | 2028-02-09 |  |  |
| RHD4CSTL1B07D161120 |  | Electrical Conduits and Pull Box Installation - 24.5 W for Lighting Fixtures - (B7.26 51 00.01)-STL1-B07-D16 | 5d | 2028-01-12 | 2028-01-18 | RHD4CSTL1B07D161119 SS, RHD4ENSTL1APPELE1300 | -144.02d |
| RHD4CSTL1B07D161121 |  | LV Cable Pulling for Lighting Fixtures - (B7.26 51 00.01)-STL1-B07-D16 | 4d | 2028-01-18 | 2028-01-23 | RHD4CSTL1B07D161120, RHD4ENSTL1APPELE1300 | -144.02d |
| RHD4CSTL1B07D161122 |  | Lighting Fixture Installation for Lighting Fixtures - (B7.26 51 00.01)-STL1-B07-D16 | 4d | 2028-01-23 | 2028-01-27 | RHD4CSTL1B07D161121, RHD4ENSTL1APPELE1300, RHD4PRSHLDOSLFS2700, RHD4PRSHLSTAGLFS2700 | -144.02d |
| RHD4CSTL1B07D161123 |  | Electrical Conduits and Pull Box Installation - 8 W for Lighting Fixtures - (B7.26 51 00.02)-STL1-B07-D16 | 3d | 2028-01-27 | 2028-01-31 | RHD4CSTL1B07D161122 | -144.02d |
| RHD4CSTL1B07D161124 |  | LV Cable Pulling for Lighting Fixtures - (B7.26 51 00.02)-STL1-B07-D16 | 3d | 2028-01-31 | 2028-02-03 | RHD4CSTL1B07D161123 | -144.02d |
| RHD4CSTL1B07D161125 |  | Lighting Fixture Installation for Lighting Fixtures - (B7.26 51 00.02)-STL1-B07-D16 | 5d | 2028-02-03 | 2028-02-09 | RHD4CSTL1B07D161124, RHD4PRSHLDOSLFS2700, RHD4PRSHLSTAGLFS2700 | -144.02d |
|  | 211 | **RHD4-02-002-STL1-Outdoor Lighting Fixtures** |  | 2027-12-20 | 2028-01-16 |  |  |
| RHD4CSTL1B07D161126 |  | Electrical Conduits and Pull Box Installation - 7 W for Lighting Fixtures - (B7.26 56 00.01)-STL1-B07-D16 | 2d | 2027-12-20 | 2027-12-22 | RHD4CSTL1B07D161112 SS, RHD4ENSTL1APPELE1300 | -138.02d |
| RHD4CSTL1B07D161127 |  | LV Cable Pulling for Lighting Fixtures - (B7.26 56 00.01)-STL1-B07-D16 | 3d | 2027-12-22 | 2027-12-26 | RHD4CSTL1B07D161126, RHD4ENSTL1APPELE1300 | -138.02d |
| RHD4CSTL1B07D161128 |  | Lighting Fixture Installation for Lighting Fixtures - (B7.26 56 00.01)-STL1-B07-D16 | 4d | 2027-12-26 | 2027-12-30 | RHD4CSTL1B07D161127, RHD4ENSTL1APPELE1300, RHD4PRSHLDOSLFS2700, RHD4PRSHLSTAGLFS2700 | -138.02d |
| RHD4CSTL1B07D161129 |  | Electrical Conduits and Pull Box Installation - 42.5 W for Lighting Fixtures - (B7.26 56 00.02)-STL1-B07-D16 | 4d | 2027-12-30 | 2028-01-04 | RHD4CSTL1B07D161128, RHD4ENSTL1APPELE1300 | -138.02d |
| RHD4CSTL1B07D161130 |  | LV Cable Pulling for Lighting Fixtures - (B7.26 56 00.02)-STL1-B07-D16 | 5d | 2028-01-04 | 2028-01-10 | RHD4CSTL1B07D161129 | -138.02d |
| RHD4CSTL1B07D161131 |  | Lighting Fixture Installation for Lighting Fixtures - (B7.26 56 00.02)-STL1-B07-D16 | 5d | 2028-01-10 | 2028-01-16 | RHD4CSTL1B07D161130, RHD4PRSHLDOSLFS2700, RHD4PRSHLSTAGLFS2700 | -138.02d |
|  | 212 | **RHD4-02-002-STL1- Enclosed Switches and Circuit Breakers** |  | 2028-01-10 | 2028-01-24 |  |  |
| RHD4CSTL1B07D161132 |  | 25-amp single-pole disconnect switches for Lighting Fixtures - (B7.26 28 16.01)-STL1-B07-D16 | 6d | 2028-01-10 | 2028-01-17 | RHD4CSTL1B07D161131 SS, RHD4ENSTL1APPELE1300, RHD4PRSHLDOSLFS2900, RHD4PRSHLSTAGLFS2900 | -138.02d |
| RHD4CSTL1B07D161133 |  | 25-amp three-pole disconnect switches for Lighting Fixtures - (B7.26 28 16.02)-STL1-B07-D16 | 6d | 2028-01-17 | 2028-01-24 | RHD4CSTL1B07D161132, RHD4ENSTL1APPELE1300, RHD4PRSHLDOSLFS2900, RHD4PRSHLSTAGLFS2900 | -138.02d |

| ID | WBS | Task | Duration | Start | Finish | Predecessors | Complete | Total float |
| --- | --- | --- | --- | --- | --- | --- | --- | --- |
|  | 213 | **RHD4-02-002-STL1-Secondery Panel Boards** |  | 2028-01-17 | 2028-01-30 |  |  |  |
| RHD4CSTL1B07D161136 |  | Panel "LPP-UT5" Installation for Panelboards - (B7.26 24 16.06)-STL1-B07-D16 | 5d | 2028-01-17 | 2028-01-23 | RHD4ENSTL1APPELE1300, RHD4PRSHLDOSLFS2400, RHD4PRSHLSTAGLFS2400, RHD4CSTL1B07D161133 SS |  | -138.02d |
| RHD4CSTL1B07D161137 |  | Panel "DB-UT5" Termination for Panelboards - (B7.26 24 16.06)-STL1-B07-D16 | 6d | 2028-01-23 | 2028-01-30 | RHD4CSTL1B07D161136, RHD4ENSTL1APPELE1300 |  | -138.02d |
|  | 214 | **RHD4-02-002-STL1-Addressable Fire-Alarm System** |  | 2028-01-12 | 2028-02-12 |  |  |  |
| RHD4CSTL1B07D161138 |  | 2 loop FACP with charger, battries and auto dialer for Fire Alarm - (B7.28 46 00.02)-STL1-B07-D16 | 4d | 2028-01-12 | 2028-01-17 | RHD4CSTL1B07D161119 SS, RHD4ENSTL1APPELE1300, RHD4PRSHLDOSLFS3000, RHD4PRSHLSTAGLFS3000 |  | -140.02d |
| RHD4CSTL1B07D161139 |  | Addressable type fire alarm Photoelectric smoke detector complete base for Fire Alarm - (B7.28 46 00.04)-STL1-B07-D16 | 4d | 2028-01-17 | 2028-01-22 | RHD4CSTL1B07D161138 |  | -140.02d |
| RHD4CSTL1B07D161140 |  | Addressable type fire alarm manual call station/pull station for Fire Alarm - (B7.28 46 00.05)-STL1-B07-D16 | 4d | 2028-01-22 | 2028-01-26 | RHD4CSTL1B07D161139 |  | -140.02d |
| RHD4CSTL1B07D161141 |  | Addressable type fire alarm manual call station/pull station for Fire Alarm - (B7.28 46 00.06)-STL1-B07-D16 | 2d | 2028-01-26 | 2028-01-29 | RHD4CSTL1B07D161140 |  | -140.02d |
| RHD4CSTL1B07D161142 |  | Conventional 24V DC fire alarm wall mounted 15cd flasher/strobe. for Fire Alarm - (B7.28 46 00.07)-STL1-B07-D16 | 3d | 2028-01-29 | 2028-02-01 | RHD4CSTL1B07D161141 |  | -140.02d |
| RHD4CSTL1B07D161143 |  | Conventional 24V DC fire alarm wall mounted 15cd weather proof for Fire Alarm - (B7.28 46 00.08)-STL1-B07-D16 | 3d | 2028-02-01 | 2028-02-05 | RHD4CSTL1B07D161142, RHD4CSTL1B07D161137 |  | -140.02d |
| RHD4CSTL1B07D161144 |  | Short CCT Isolator. for Fire Alarm - (B7.28 46 00.09)-STRM1-B07-D16 | 2d | 2028-02-05 | 2028-02-07 | RHD4CSTL1B07D161143 |  | -140.02d |
| RHD4CSTL1B07D161145 |  | Addressable Control module. for Fire Alarm - (B7.28 46 00.10)-STL1-B07-D16 | 4d | 2028-02-07 | 2028-02-12 | RHD4CSTL1B07D161144 |  | -140.02d |
|  | 215 | **RHD4-02-002-STL1-Main Motor Control Center (MCC)** |  | 2028-01-17 | 2028-01-30 |  |  |  |
| RHD4CSTL1B07D161151 |  | Installation for MCC-8 - (B7.26 29 00.03)-STL1-B07-D16 | 6d | 2028-01-17 | 2028-01-24 | RHD4CSTL1B07D161133 SS, RHD4ENSTL1APPELE1300, RHD4PRSHLDOSLFS2300, RHD4PRSHLSTAGLFS2300 |  | -135.02d |
| RHD4CSTL1B07D161152 |  | Termination for MCC-8 - (B7.26 29 00.03)-STL1-B07-D16 | 5d | 2028-01-24 | 2028-01-30 | RHD4CSTL1B07D161151, RHD4ENSTL1APPELE1300 |  | -135.02d |
|  | 216 | **RHD4-02-002-STL1-Programmable Logic Controllers** |  | 2028-03-23 | 2028-04-11 |  |  |  |
| RHD4CSTL1B07D161153 |  | PLC System Installation for - (B7.40 63 43.01)-STL1-B07-D16 | 6d | 2028-03-23 | 2028-03-30 | RHD4CSTL1B07D161152, RHD4CSTL1B07D161125, RHD4ENSTL1APPELE1300, RHD4CZ2C082RD7100, RHD4PRLOLSTAGLFS1700 |  | -177.02d |
| RHD4CSTL1B07D161154 |  | Process Control Wiring Installation for - (B7.40 67 10.01)-STL1-B07-D16 | 5d | 2028-03-30 | 2028-04-05 | RHD4CSTL1B07D161153, RHD4ENSTL1APPELE1300, RHD4CSTL1B07D161145, RHD4PRLOLSTAGLFS1700 |  | -177.02d |
| RHD4CSTL1B07D161155 |  | Instrumentation for Process Systems for - (B7.40 70 00.01)-STL1-B07-D16 | 5d | 2028-04-05 | 2028-04-11 | RHD4CSTL1B07D161154, RHD4ENSTL1APPELE1300, RHD4PRLOLSTAGLFS1700 |  | -177.02d |
|  | 217 | **RHD4-02-002-Storm Lift Station 01-Site Works** |  | 2027-12-26 | 2028-04-30 |  |  |  |
|  | 218 | **RHD4-02-002-STL1-FLOW METER CHAMABER** |  | 2027-12-26 | 2028-02-23 |  |  |  |
|  | 219 | **RHD4-02-002-STL1-Concrete works** |  | 2027-12-26 | 2028-01-15 |  |  |  |
| RHD4CSTL1B07D031156 |  | Lean Concrete Plain Concrete - (B7.03 00 00 .01)-STL1-B07-D03 | 2d | 2027-12-26 | 2027-12-28 | RHD4CSTL1B07D031034, RHD4CSTL1B07D091072, RHD4CSTL1B07D091090 SS, RHD4CSTL1B07D151033 SS, RHD4CSTL1B07D151096 |  | -139.02d |
| RHD4CSTL1B07D031157 |  | Water proofing membrance Bituminous Sheet - (B7.07 13 13.01)-STL1-B07-D03 | 3d | 2027-12-28 | 2028-01-01 | RHD4CSTL1B07D031156, RHD4PRSHLDOSLFS1200, RHD4PRSHLSTAGLFS1200 |  | -139.02d |
| RHD4CSTL1B07D031158 |  | Screed 50mm - (B7.03 00 00 .04)-STL1-B07-D03 | 2d | 2028-01-01 | 2028-01-03 | RHD4CSTL1B07D031157 |  | -139.02d |
| RHD4CSTL1B07D031159 |  | Steel Fixing - (B7.03 00 00 .04)-STL1-B07-D03 | 4d | 2028-01-03 | 2028-01-08 | RHD4CSTL1B07D031158 |  | -139.02d |
| RHD4CSTL1B07D031160 |  | Formwork - (B7.03 00 00 .04)-STL1-B07-D03 | 4d | 2028-01-08 | 2028-01-12 | RHD4CSTL1B07D031159 |  | -139.02d |
| RHD4CSTL1B07D031161 |  | RC Casting Fluid-Applied - (B7.03 00 00 .04)-STL1-B07-D03 | 2d | 2028-01-12 | 2028-01-15 | RHD4CSTL1B07D031160 |  | -139.02d |
|  | 220 | **RHD4-02-002-STL1-Retaining Walls & Slab** |  | 2028-01-15 | 2028-01-30 |  |  |  |
| RHD4CSTL1B07D031162 |  | Steel Fixing - (B7.03 00 00 .07)-STL1-B07-D03 | 4d | 2028-01-15 | 2028-01-19 | RHD4CSTL1B07D031161, RHD4ENSTL1APPSTC1000 |  | -139.02d |
| RHD4CSTL1B07D031163 |  | Formwork - (B7.03 00 00 .07)-STL1-B07-D03 | 3d | 2028-01-19 | 2028-01-23 | RHD4CSTL1B07D031162, RHD4ENSTL1APPSTC1000 |  | -139.02d |
| RHD4CSTL1B07D031164 |  | RC Casting - (B7.03 00 00 .07)-STL1-B07-D03 | 4d | 2028-01-23 | 2028-01-27 | RHD4CSTL1B07D031163, RHD4ENSTL1APPSTC1000 |  | -139.02d |
| RHD4CSTL1B07D031165 |  | Water protection Board membrance Fluid-Applied - (B7.03 00 00 .07)-STL1-B07-D03 | 2d | 2028-01-27 | 2028-01-30 | RHD4CSTL1B07D031164, RHD4PRSHLDOSLFS1300, RHD4PRSHLSTAGLFS1300 |  | -139.02d |
|  | 221 | **RHD4-02-002-STL1-Metal Floor Door** |  | 2028-01-30 | 2028-02-05 |  |  |  |
| RHD4CSTL1B07D021166 |  | Installation of metal door size (600x600mm) - (B7.08 31 13.01)-STL1-B07-D02 | 5d | 2028-01-30 | 2028-02-05 | RHD4CSTL1B07D031165, RHD4PRSHLDOSLFS1400, RHD4PRSHLSTAGLFS1400 |  | -139.02d |
|  | 222 | **RHD4-02-002-STL1-Magnetic type flowmeter Installation** |  | 2028-02-05 | 2028-02-23 |  |  |  |
| RHD4CSTL1B07D151167 |  | Flow meter installation 150mm - (B7.22 05 19.03)-STL1-B07-D15 | 5d | 2028-02-05 | 2028-02-10 | RHD4CSTL1B07D021166, RHD4PRLOLSTAGLFS1200, RHD4ENSTL1APPMEC1200, RHD4GNPPSD1100, RHD4ENSDZ6SUBRD220, RHD4ENSDSTL1SUB3000 |  | -139.02d |
| RHD4CSTL1B07D151168 |  | UPVC Conduits 1 inch UPVC - (B7.22 05 19.03)-STL1-B07-D15 | 4d | 2028-02-10 | 2028-02-15 | RHD4CSTL1B07D151167, RHD4ENSTL1APPMEC1200, RHD4GNPPSD1100, RHD4ENSDZ6SUBRD220, RHD4ENSDSTL1SUB3000 |  | -139.02d |
| RHD4CSTL1B07D151169 |  | Electrical power and cable connection - (B7.22 05 19.03)-STL1-B07-D15 | 3d | 2028-02-15 | 2028-02-19 | RHD4CSTL1B07D151168 |  | -139.02d |
| RHD4CSTL1B07D151170 |  | Flow meter Panel Integration and connection - (B7.22 05 19.03)-STL1-B07-D15 | 3d | 2028-02-19 | 2028-02-23 | RHD4CSTL1B07D151169 |  | -139.02d |
|  | 223 | **RHD4-02-002-STL1-GENERATOR FOUNDATION** |  | 2027-12-28 | 2028-04-30 |  |  |  |
|  | 224 | **RHD4-02-002-STL1-GENERATOR FOUNDATION-Concrete works** |  | 2027-12-28 | 2028-01-24 |  |  |  |
| RHD4CSTL1B07D031171 |  | Lean Concrete Plain Concrete - (B7.03 00 00 .01)-STL1-B07-D03 | 2d | 2027-12-28 | 2027-12-30 | RHD4CSTL1B07D031156, RHD4ENSTL1APPSTC1000 |  | -132.02d |
| RHD4CSTL1B07D031172 |  | Water proofing membrance Bituminous Sheet - (B7.07 13 13.01)-STL1-B07-D03 | 3d | 2027-12-30 | 2028-01-03 | RHD4CSTL1B07D031171, RHD4ENSTL1APPSTC1000, RHD4PRSHLDOSLFS1200, RHD4PRSHLSTAGLFS1200 |  | -132.02d |
| RHD4CSTL1B07D031173 |  | Screed 50mm - (B7.03 00 00 .04)-STL1-B07-D03 | 4d | 2028-01-03 | 2028-01-08 | RHD4CSTL1B07D031172, RHD4ENSTL1APPSTC1000 |  | -132.02d |
| RHD4CSTL1B07D031174 |  | Steel Fixing - (B7.03 00 00 .04)-STL1-B07-D03 | 4d | 2028-01-08 | 2028-01-12 | RHD4CSTL1B07D031173, RHD4ENSTL1APPSTC1000 |  | -132.02d |
| RHD4CSTL1B07D031175 |  | Formwork - (B7.03 00 00 .04)-STL1-B07-D03 | 5d | 2028-01-12 | 2028-01-18 | RHD4CSTL1B07D031174 |  | -132.02d |
| RHD4CSTL1B07D031176 |  | RC Casting - (B7.03 00 00 .04)-STL1-B07-D03 | 5d | 2028-01-18 | 2028-01-24 | RHD4CSTL1B07D031175 |  | -132.02d |
|  | 225 | **RHD4-02-002-STL1-Standby Diesel Generator** |  | 2028-01-24 | 2028-04-30 |  |  |  |
| RHD4CSTL1B07D151177 |  | Standby Diesel Generator Set 150 KVA - Installation 100kva - (B7.26 32 12.05)-STL1-B07-D15 | 4d | 2028-01-24 | 2028-01-29 | RHD4CSTL1B07D031176, RHD4ENSTL1APPELE1300, RHD4PRLOLSTAGLFS1600 |  | -132.02d |
| RHD4CSTL1B07D151178 |  | Automatic Transfer Switch ATS panel 300A - Installation 160A - (B7.26 32 12.06)-STL1-B07-D15 | 4d | 2028-01-29 | 2028-02-02 | RHD4CSTL1B07D151177, RHD4ENSTL1APPELE1300 |  | -132.02d |
| RHD4CSTL1B07D151179 |  | Lean Concrete Plain Concrete - (B7.03 00 00 .01)-STL1-B07-D15 | 5d | 2028-02-02 | 2028-02-08 | RHD4CSTL1B07D151178 |  | -132.02d |
| RHD4CSTL1B07D151180 |  | Water proofing membrance Bituminous Sheet - (B7.07 13 13.01)-STL1-B07-D15 | 5d | 2028-04-05 | 2028-04-11 | RHD4CSTL1B07D151179, RHD4CSTL1B07D161155 SS, RHD4PRSHLDOSLFS1200, RHD4PRSHLSTAGLFS1200 |  | -177.02d |
| RHD4CSTL1B07D151181 |  | Screed 50mm - (B7.03 00 00 .04)-STL1-B07-D15 | 3d | 2028-04-11 | 2028-04-15 | RHD4CSTL1B07D151180, RHD4CSTL1B07D151170 |  | -177.02d |
| RHD4CSTL1B07D151182 |  | Steel Fixing - (B7.03 00 00 .05)-STL1-B07-D15 | 4d | 2028-04-15 | 2028-04-19 | RHD4CSTL1B07D151181 |  | -177.02d |
| RHD4CSTL1B07D151183 |  | Formwork - (B7.03 00 00 .05)-STL1-B07-D15 | 3d | 2028-04-19 | 2028-04-23 | RHD4CSTL1B07D151182 |  | -177.02d |
| RHD4CSTL1B07D151184 |  | RC Casting - (B7.03 00 00 .05)-STL1-B07-D15 | 3d | 2028-04-23 | 2028-04-26 | RHD4CSTL1B07D151183 |  | -177.02d |
| RHD4CSTL1B07D151185 |  | Water protection Board membrance Fluid-Applied - (B7.07 13 13.01)-STL1-B07-D15 | 3d | 2028-04-26 | 2028-04-30 | RHD4CSTL1B07D151184, RHD4PRSHLDOSLFS1300, RHD4PRSHLSTAGLFS1300 |  | -177.02d |
|  | 4 | **Sewage Lift Station 01** |  | 2026-10-20 | 2028-04-09 |  |  |  |
|  | 20 | **RHD4-02-002-Sewage Lift Station 01-Electrical Room** |  | 2026-10-20 | 2028-03-26 |  |  |  |
|  | 21 | **RHD4-02-002-SWL1-B07-Sub Structure** |  | 2026-10-20 | 2027-12-02 |  |  |  |
|  | 22 | **RHD4-02-002-SWL1-B07-Electrical Room-Plain Concrete** |  | 2026-10-20 | 2027-06-03 |  |  |  |
| RHD4CSWL1B07D031035 |  | Shuttering Plain Concrete for Electrical Room - (B7.03 00 00 .01)-SWL1-B07-D03 | 3d | 2026-10-20 A | 2026-10-22 A | RHD4CZ9L02ST1501, RHD4CZ9L02ST1504, RHD4CZ9L02ST1506, RHD4CZ8L04ST2200, RHD4CZ8L04ST1504, RHD4CZ8A011ST1504, RHD4CZ8A011ST1509, RHD4CZ4L014ST8500, RHD4CZ5L016SW3500, RHD4CZ5L08PT4500, RHD4CZ5C061PT3200, RHD4CZ5C061PT4500, RHD4CZ5C051ICT3400, RHD4CZ5C051TC3400, RHD4CZ6A015PT4500, RHD4CZ6A015PT3202, RHD4CZ6A015PT3200 | 100% |  |
| RHD4CSWL1B07D031036 |  | Lean Concrete Plain Concrete for Electrical Room - (B7.03 00 00 .01)-SWL1-B07-D03 | 2d | 2027-06-02 | 2027-06-03 | RHD4CSWL1B07D031035, RHD4CZ8L04ST1502, RHD4CZ8A011ST1502, RHD4CZ8A011ST1503, RHD4CZ4C031PT2400, RHD4CZ4C031PT3203 |  | -159d |
|  | 23 | **RHD4-02-002-SWL1-B07-Electrical Room-Footing / Foundation** |  | 2027-06-05 | 2027-07-11 |  |  |  |
| RHD4CSWL1B07D031037 |  | Shuttering Foundation for Electrical Room - (B7.03 00 00 .05)-SWL1-B07-D03 | 3d | 2027-06-05 | 2027-06-07 | RHD4CSWL1B07D031036 |  | -159d |
| RHD4CSWL1B07D031038 |  | Steel Fixing Foundation for Electrical Room - (B7.03 00 00 .05)-SWL1-B07-D03 | 4d | 2027-07-01 | 2027-07-05 | RHD4CSWL1B07D031037, RHD4CZ3C083SW3500, RHD4CZ1C081SW3500, RHD4CZ9L02ST3502, RHD4CZ8A011ST1500, RHD4CZ5L07SW3500, RHD4CZ6C052PT3200, RHD4CZ4L09PT3203, RHD4CZ4L09PT3202 |  | -179d |
| RHD4CSWL1B07D031039 |  | RC Casting Foundation for Electrical Room - (B7.03 00 00 .05)-SWL1-B07-D03 | 2d | 2027-07-06 | 2027-07-07 | RHD4CSWL1B07D031038, RHD4CZ2C082ST1200, RHD4CZ9L02ST3500, RHD4CZ4C031SL2400, RHD4CZ4C031MV2400, RHD4CZ4C031PT4500, RHD4CZ6A015IRR3202 |  | -179d |
| RHD4CSWL1B07D031040 |  | Deshuttering Foundation for Electrical Room - (B7.03 00 00 .05)-SWL1-B07-D03 | 3d | 2027-07-08 | 2027-07-11 | RHD4CSWL1B07D031039, RHD4CZ2C082ST1501, RHD4CZ8A011ST8500, RHD4CZ4L014PT3202, RHD4CZ4C031ICT3400, RHD4CZ5A014PT3202, RHD4CZ6A015IRR3203 |  | -179d |
|  | 24 | **RHD4-02-002-SWL1-B07-Electrical Room-Neck Column** |  | 2027-07-27 | 2027-08-10 |  |  |  |

| ID | WBS | Task | Duration | Start | Finish | Predecessors | Total float |
| --- | --- | --- | --- | --- | --- | --- | --- |
| RHD4CSWL1B07D031041 |  | Steel Fixing for Neck Column for Electrical Room - (B7.03 00 00 .06)-SWL1-B07-D03 | 3d | 2027-07-27 | 2027-07-31 | RHD4CSWL1B07D031040, RHD4CZ2C082ST3502, RHD4CZ6C052PT4500, RHD4CZ6A015ST7500, RHD4CZ6C062PT4500 | -192.02d |
| RHD4CSWL1B07D031042 |  | Shuttering for Neck Column for Electrical Room - (B7.03 00 00 .06)-SWL1-B07-D03 | 4d | 2027-07-31 | 2027-08-04 | RHD4CSWL1B07D031041 | -192.02d |
| RHD4CSWL1B07D031043 |  | RC Casting for Neck Column for Electrical Room - (B7.03 00 00 .06)-SWL1-B07-D03 | 2d | 2027-08-04 | 2027-08-07 | RHD4CSWL1B07D031042 | -192.02d |
| RHD4CSWL1B07D031044 |  | Deshuttering for Neck Column for Electrical Room - (B7.03 00 00 .06)-SWL1-B07-D03 | 3d | 2027-08-07 | 2027-08-10 | RHD4CSWL1B07D031043, RHD4CZ7C02ST1508, RHD4CZ7C013IRR1500, RHD4CZ7L03ST1500, RHD4CZ9C071ST3501, RHD4CZ8L04ST3502, RHD4CZ8A011ST3502, RHD4CZ4L014IRR3202 | -192.02d |
|  | 25 | **RHD4-02-002-SWL1-B07-Electrical Room-Ground Beams** |  | 2027-08-10 | 2027-08-24 |  |  |
| RHD4CSWL1B07D031045 |  | Steel Fixing for Ground Beams for Electrical Room - (B7.03 00 00 .08)-SWL1-B07-D03 | 3d | 2027-08-10 | 2027-08-14 | RHD4CSWL1B07D031044, RHD4CZ2C082ST8500, RHD4CZ7C02ST1500, RHD4CZ7L03ST3502, RHD4CZ9L02PT3203, RHD4CZ9C071ST3502, RHD4CZ8L04SW2500, RHD4CZ4C031RD2100, RHD4CZ7RA05SL2400 | -192.02d |
| RHD4CSWL1B07D031046 |  | Shuttering for Ground Beams for Electrical Room - (B7.03 00 00 .08)-SWL1-B07-D03 | 4d | 2027-08-14 | 2027-08-18 | RHD4CSWL1B07D031045, RHD4CZ2L011PT3203, RHD4CZ9L06ST1505, RHD4CZ9C071ST3500, RHD4CZ8L04SW3501, RHD4CZ8A011ST3501, RHD4CZ5L016ICT3400 | -192.02d |
| RHD4CSWL1B07D031047 |  | RC Casting for Ground Beams for Electrical Room - (B7.03 00 00 .08)-SWL1-B07-D03 | 2d | 2027-08-18 | 2027-08-21 | RHD4CSWL1B07D031046, RHD4CZ1L101PT4500, RHD4CZ7C02ST8100, RHD4CZ9L02IRR3202, RHD4CZ9L02ST7500, RHD4CZ9L05ST7500, RHD4CZ8L04IRR1503 FF, RHD4CZ8A011ST3500 | -192.02d |
| RHD4CSWL1B07D031048 |  | Deshuttering for Ground Beams for Electrical Room - (B7.03 00 00 .08)-SWL1-B07-D03 | 3d | 2027-08-21 | 2027-08-24 | RHD4CSWL1B07D031047, RHD4CZ2L011MV2400, RHD4CZ2L011PT4500, RHD4CZ9L02IRR3201, RHD4CZ9L02IRR2400, RHD4CZ9L02IRR1507 FF, RHD4CZ9L06ST1502, RHD4CZ8L04ST3401, RHD4CZ7RA05RD2100 | -192.02d |
|  | 26 | **RHD4-02-002-SWL1-B07-Electrical Room-Aggregate base Course** |  | 2027-08-24 | 2027-09-01 |  |  |
| RHD4CSWL1B07D031049 |  | Laying Aggregate base course Slab on Grade - (B7.32 11 23.01)-SWL1-B07-D03 | 4d | 2027-08-24 | 2027-08-29 | RHD4CSWL1B07D031048, RHD4CZ7L03SW1500, RHD4CZ7L03ST7500, RHD4CZ9L06ST1500, RHD4CZ8L04SW3500, RHD4CZ4L014SW3500, RHD4CZ5L07IRR3202, RHD4CZ5L016PT4500 | -192.02d |
| RHD4CSWL1B07D031050 |  | Compaction Slab on Grade - (B7.32 11 23.01)-SWL1-B07-D03 | 3d | 2027-08-29 | 2027-09-01 | RHD4CSWL1B07D031049, RHD4CZ2L011ICT3400, RHD4CZ2L011LV2400, RHD4CZ8L04PT4500, RHD4CZ8L04PT3200, RHD4CZ8L04ST7500, RHD4CZ5L07ICT3400, RHD4CZ5L07SL2400 | -192.02d |
|  | 27 | **RHD4-02-002-SWL1-B07-Electrical Room-Slab on Grade** |  | 2027-09-04 | 2027-09-27 |  |  |
| RHD4CSWL1B07D031051 |  | Screeding for SOG works Slab on Grade for Electrical Room - (B7.03 00 00 .02)-SWL1-B07-D03 | 4d | 2027-09-04 | 2027-09-08 | RHD4CSWL1B07D031050, RHD4CZ3L122SW3500, RHD4CZ2L102IRR3200, RHD4CZ7C02ST3500, RHD4CZ2L102ST4600 | -194.02d |
| RHD4CSWL1B07D031052 |  | Shuttering for Slab on Grade for Electrical Room - (B7.03 00 00 .09)-SWL1-B07-D03 | 5d | 2027-09-08 | 2027-09-14 | RHD4CSWL1B07D031051, RHD4CZ7C02ST3501, RHD4CZ9L02PT3200, RHD4CZ9L02PT3202, RHD4CZ8A011SW2500 | -194.02d |
| RHD4CSWL1B07D031053 |  | Steel Fixing for Slab on Grade for Electrical Room - (B7.03 00 00 .09)-SWL1-B07-D03 | 5d | 2027-09-14 | 2027-09-20 | RHD4CSWL1B07D031052, RHD4CZ1C081PT4500, RHD4CZ1L101SW3500, RHD4CZ7C02SW1500, RHD4CZ7L03SW3000, RHD4CZ7L03SW4403, RHD4CZ7L03SW4401, RHD4CZ7L03SW5201, RHD4CZ7L03SW5200, RHD4CZ9L06ST3502, RHD4CZ9L05PT5100, RHD4CZ9C071PT3202, RHD4PRLOLSTAGLFS1400, RHD4PRLOLSTAGLFS1300, RHD4PRLOLSTAGLFS1200 | -194.02d |
| RHD4CSWL1B07D031054 |  | RC Casting for Slab on Grade for Electrical Room - (B7.03 00 00 .09)-SWL1-B07-D03 | 2d | 2027-09-20 | 2027-09-22 | RHD4CSWL1B07D031053, RHD4CZ3C011PT3202, RHD4CZ3C011PT3201, RHD4CZ2L102PT4500, RHD4CZ9L06SW3501, RHD4CZ9L05PT3200, RHD4CZ9L05PT3203, RHD4CZ9L05PT2402, RHD4CZ8A011IRR3203, RHD4PRLOLSTAGLFS1700 FF, RHD4PRLOLSTAGLFS2000, RHD4PRLOLSTAGLFS1600 | -194.02d |
| RHD4CSWL1B07D031055 |  | Deshuttering for Slab on Grade for Electrical Room - (B7.03 00 00 .09)-SWL1-B07-D03 | 3d | 2027-09-22 | 2027-09-27 | RHD4CSWL1B07D031054, RHD4CZ2C082PT4500, RHD4CZ9L06ST7500, RHD4CZ9L05SW3500, RHD4CZ8L04IRR2402 | -194.02d |
|  | 28 | **RHD4-02-002-SWL1-B07-Electrical Room-Fluid-Applied Waterproofing** |  | 2027-09-27 | 2027-10-02 |  |  |
| RHD4CSWL1B07D071056 |  | 2 coats of bitumen on Grade Beams and SOW Slab on Grade - (B7.07 14 00.01)-SWL1-B07-D07 | 4d | 2027-09-27 | 2027-10-02 | RHD4CSWL1B07D031055, RHD4PRSHLDOSLFS1200, RHD4PRSHLSTAGLFS1200, RHD4CZ3L122IRR1300, RHD4CZ3L122PT3201, RHD4CZ8L04IRR3203, RHD4CZ5L07PT4500 | -194.02d |
|  | 29 | **RHD4-02-002-SWL1-B07-Electrical Room-Vapor Retarders** |  | 2027-10-02 | 2027-10-05 |  |  |
| RHD4CSWL1B07D071057 |  | 250 micron Polyethylene sheet Slab on Grade - (B7.07 26 16.01)-SWL1-B07-D07 | 3d | 2027-10-02 | 2027-10-05 | RHD4CSWL1B07D071056, RHD4PRSHLDOSLFS1200, RHD4PRSHLSTAGLFS1200, RHD4CZ3C011ICT3400, RHD4CZ3C011IRR2402, RHD4CZ3C011IRR3202, RHD4CZ3C011IRR3203, RHD4CZ9L06SW3500, RHD4CZ9L05PT4500, RHD4CZ9C071ST7500, RHD4CZ8L04IRR3200, RHD4CZ4C012IRR3200, RHD4CZ4L09ST7500, RHD4CZ7L03IRR3102, RHD4CZ7L03IRR2401, RHD4CZ8A011IRR1503, RHD4CZ8A011IRR3201, RHD4PRLOLSTACCTV1001 | -194.02d |
|  | 30 | **RHD4-02-002-SWL1-B07-Electrical Room-Columns** |  | 2027-10-05 | 2027-10-23 |  |  |
| RHD4CSWL1B07D031058 |  | Shuttering for Columns for Electrical Room - (B7.03 00 00 .13)-SWL1-B07-D03 | 5d | 2027-10-05 | 2027-10-11 | RHD4CSWL1B07D071057, RHD4CZ3C011LV2400, RHD4CZ3C011MV2400, RHD4CZ7L03IRR3200, RHD4CZ9L02IRR1500, RHD4CZ9L05ST3500 | -194.02d |
| RHD4CSWL1B07D031059 |  | Steel Fixing for Columns for Electrical Room - (B7.03 00 00 .13)-SWL1-B07-D03 | 3d | 2027-10-12 | 2027-10-16 | RHD4CSWL1B07D031058, RHD4CZ3C011IRR3201, RHD4CZ7C02PT3202, RHD4CZ4L09PT3201, RHD4CZ4L09ST3501, RHD4CZ4L014PT4500, RHD4PRLOLSTAGMV1602, RHD4PRLOLSTAGMV1601, RHD4CZ8RA04SL2400, RHD4CZ7C032IRR3200, RHD4CZ4C031RW3000, RHD4CZ7C032PT4500 FF, RHD4CZ7L03IRR3201 FF, RHD4CZ7L03IRR3203, RHD4CZ8A011PT4500, RHD4CZ4C012LV4300, RHD4CZ8A011PT2401 | -195.02d |
| RHD4CSWL1B07D031060 |  | RC Casting for Columns for Electrical Room - (B7.03 00 00 .13)-SWL1-B07-D03 | 2d | 2027-10-16 | 2027-10-18 | RHD4CSWL1B07D031059, RHD4CZ7C02PT3200, RHD4CZ7C02PT4500, RHD4CZ9L06PT4500, RHD4CZ8A011PT3201, RHD4CZ8A011PT3202, RHD4CZ7C02ST3502, RHD4CZ8L04SL2400, RHD4CZ4C012RW3000, RHD4CZ7C032RD7100, RHD4CZ7C032RD8100 | -195.02d |
| RHD4CSWL1B07D031061 |  | Deshuttering for Columns for Electrical Room - (B7.03 00 00 .13)-SWL1-B07-D03 | 4d | 2027-10-18 | 2027-10-23 | RHD4CSWL1B07D031060, RHD4CZ3C083ST8500, RHD4CZ3C011PT4500, RHD4CZ8A011PT3203, RHD4CZ4L09PT3203, RHD4CZ4RA02SL5200 | -195.02d |
|  | 31 | **RHD4-02-002-SWL1-B07-Electrical Room-Beams** |  | 2027-10-23 | 2027-11-18 |  |  |
| RHD4CSWL1B07D031062 |  | Shuttering for Roof Beams for Electrical Room - (B7.03 00 00 .14)-SWL1-B07-D03 | 6d | 2027-10-23 | 2027-10-30 | RHD4CSWL1B07D031061, RHD4CZ9C071LV3400, RHD4CZ3L122PT4500 FF, RHD4CZ7A012PT3201, RHD4CZ7A012PT4500, RHD4CZ5B14EX1003, RHD4CZ5RA07CCTV1500 FF | -195.02d |
| RHD4CSWL1B07D031063 |  | Steel Fixing for Roof Beams for Electrical Room - (B7.03 00 00 .14)-SWL1-B07-D03 | 8d | 2027-11-02 | 2027-11-10 | RHD4CSWL1B07D031062, RHD4CZ7C02ST8500, RHD4CZ9L02PT4500, RHD4CZ4L09PT3200, RHD4CZ4RA02SL1500, RHD4CZ6C052RD7100 FF, RHD4CZ7A012IRR5100, RHD4CZ6RA01RD9100, RHD4CZ3L122PT3202, RHD4CZ7A012IRR3202, RHD4CZ3C011SL3100 | -198d |
| RHD4CSWL1B07D031064 |  | RC Casting for Roof Beams for Electrical Room - (B7.03 00 00 .14)-SWL1-B07-D03 | 4d | 2027-11-11 | 2027-11-15 | RHD4CSWL1B07D031063, RHD4CZ3C083ST7500, RHD4CZ8A011ST7500, RHD4CZ1C081TC5200, RHD4CZ4L01RD7100, RHD4CZ7C02IRR3202, RHD4CZ3L122LV5200 | -198d |
| RHD4CSWL1B07D031065 |  | Deshuttering for Roof Beams for Electrical Room - (B7.03 00 00 .14)-SWL1-B07-D03 | 3d | 2027-11-16 | 2027-11-18 | RHD4CSWL1B07D031064, RHD4CZ7L03PT4500, RHD4CZ7L03SW3500, RHD4CZ9L02SW3500, RHD4CZ4C031SL6100, RHD4CZ4C031SL1500, RHD4CZ4A013LV5100, RHD4CZ1L101ICT5200, RHD4CZ2B05EX1001, RHD4CZ9L05RD7100 | -198d |
|  | 32 | **RHD4-02-002-SWL1-B07-Electrical Room-Roof Slab** |  | 2027-11-20 | 2027-12-02 |  |  |
| RHD4CSWL1B07D031066 |  | Shuttering for Roof Slab for Electrical Room - (B7.03 00 00 .15)-SWL1-B07-D03 | 3d | 2027-11-20 | 2027-11-22 | RHD4CSWL1B07D031065, RHD4CZ3L122SL1100, RHD4CZ1C081ICT2400 | -198d |
| RHD4CSWL1B07D031067 |  | Steel Fixing for Roof Slab for Electrical Room - (B7.03 00 00 .15)-SWL1-B07-D03 | 4d | 2027-11-23 | 2027-11-27 | RHD4CSWL1B07D031066, RHD4CZ7L03IRR3202, RHD4CZ5C061RD7100, RHD4CZ4BZ4EX1001, RHD4CZ3L122SL5200, RHD4CZ4A013RD4100, RHD4CZ5C061RD8100, RHD4CZ9L02TC5200 | -198d |
| RHD4CSWL1B07D031068 |  | RC Casting for Roof Slab for Electrical Room - (B7.03 00 00 .15)-SWL1-B07-D03 | 2d | 2027-11-28 | 2027-11-29 | RHD4CSWL1B07D031067, RHD4CZ4L09SW3500, RHD4CZ4A013RD8100, RHD4CZ4B08EX1001 | -198d |
| RHD4CSWL1B07D031069 |  | Deshuttering for Roof Slab for Electrical Room - (B7.03 00 00 .15)-SWL1-B07-D03 | 3d | 2027-11-30 | 2027-12-02 | RHD4CSWL1B07D031068, RHD4CZ4L09PT4500, RHD4CZ3BZ3EX1002 | -198d |
|  | 33 | **RHD4-02-002-SWL1-B07-Finishes** |  | 2027-12-04 | 2028-01-18 |  |  |
|  | 34 | **RHD4-02-002-SWL1-B07-Finishes-Masonary** |  | 2027-12-04 | 2027-12-08 |  |  |
| RHD4CSWL1B07D091070 |  | Masonary Block work (CMU walls) Insulated Block Work - (B7.04 22 00.01)-SWL1-B07-D09 | 5d | 2027-12-04 | 2027-12-08 | RHD4CSWL1B07D031069, RHD4ENSWL1APPARC1100, RHD4GNPPSD1100, RHD4ENSDSWL1SUB2000, RHD4ENSDZ6SUBRD220, RHD4ENSDSTL1SUB2000 | -198d |
|  | 35 | **RHD4-02-002-SWL1-B07-Finishes-Roofs waterproofing system** |  | 2027-12-04 | 2027-12-25 |  |  |
| RHD4CSWL1B07D071071 |  | 250 micron Polyethylene sheet - (B7.07 00 00.06)-SWL1-B07-D07 | 2d | 2027-12-04 | 2027-12-05 | RHD4CSWL1B07D091070 SS, RHD4PRSHLDOSLFS1200, RHD4PRSHLDOSLFS1100, RHD4PRSHLSTAGLFS1200, RHD4PRSHLSTAGLFS1100, RHD4ENSWL1APPARC1100, RHD4GNPPSD1100, RHD4ENSDSWL1SUB2000, RHD4ENSDZ6SUBRD220, RHD4ENSDSTL1SUB2000 | -198d |
| RHD4CSWL1B07D071072 |  | 50 mm thick minimum Foam Concrete - (B7.07 00 00.05)-SWL1-B07-D07 | 3d | 2027-12-06 | 2027-12-08 | RHD4CSWL1B07D071071, RHD4PRSHLDOSLFS1100, RHD4PRSHLSTAGLFS1100, RHD4ENSWL1APPARC1100, RHD4GNPPSD1100, RHD4ENSDSWL1SUB2000, RHD4ENSDZ6SUBRD220, RHD4ENSDSTL1SUB2000 | -198d |
| RHD4CSWL1B07D071073 |  | 30 mm thick Screed Concrete - (B7.07 00 00.04)-SWL1-B07-D07 | 3d | 2027-12-09 | 2027-12-12 | RHD4CSWL1B07D071072, RHD4PRSHLDOSLFS1100, RHD4PRSHLSTAGLFS1100, RHD4CZ2C082CCTV6100, RHD4CZ2C082RD3200, RHD4CZ4RA02RD7100, RHD4CZ6RA01CCTV1500, RHD4ENSWL1APPARC1100, RHD4GNPPSD1100, RHD4ENSDSWL1SUB2000, RHD4ENSDZ6SUBRD220, RHD4ENSDSTL1SUB2000, RHD4GNSLZ1FT1600 | -198d |
| RHD4CSWL1B07D071074 |  | 4 mm thick Waterproofing Bituminous Membrane - (B7.07 00 00.03)-SWL1-B07-D07 | 3d | 2027-12-13 | 2027-12-15 | RHD4CSWL1B07D071073, RHD4PRSHLDOSLFS1200, RHD4PRSHLDOSLFS1100, RHD4PRSHLSTAGLFS1200, RHD4PRSHLSTAGLFS1100, RHD4CZ4C031CCTV1500, RHD4CZ6C052SL6100, RHD4ENSWL1APPARC1100, RHD4GNPPSD1100, RHD4ENSDSWL1SUB2000, RHD4ENSDZ6SUBRD220, RHD4ENSDSTL1SUB2000, RHD4CZ7B24BF2000 | -198d |
| RHD4CSWL1B07D071075 |  | Geotextile Membrane - (B7.07 00 00.02)-SWL1-B07-D07 | 4d | 2027-12-16 | 2027-12-20 | RHD4CSWL1B07D071074, RHD4PRSHLDOSLFS1100, RHD4PRSHLSTAGLFS1100, RHD4CZ6A02CCTV6100, RHD4ENSWL1APPARC1100, RHD4GNPPSD1100, RHD4ENSDSWL1SUB2000, RHD4ENSDZ6SUBRD220, RHD4ENSDSTL1SUB2000, RHD4CZ4B07EX1001 | -198d |
| RHD4CSWL1B07D071076 |  | 50 mm thick Gravel Toppings - (B7.07 00 00.01)-SWL1-B07-D07 | 4d | 2027-12-21 | 2027-12-25 | RHD4CSWL1B07D071075, RHD4PRSHLDOSLFS1100, RHD4PRSHLSTAGLFS1100, RHD4CZ1L101LV3400, RHD4CZ2C082SL1500, RHD4CZ7L03MV4200, RHD4CZ4A013TC2400, RHD4CZ4L01MV3300, RHD4ENSWL1APPARC1100, RHD4GNPPSD1100, RHD4ENSDSWL1SUB2000, RHD4ENSDZ6SUBRD220, RHD4ENSDSTL1SUB2000, RHD4GNSLZ2FT1600 | -198d |
|  | 36 | **RHD4-02-002-SWL1-B07-Finishes-Manufactured Copings** |  | 2027-12-21 | 2027-12-26 |  |  |
| RHD4CSWL1B07D091077 |  | Supply and install Stone coping 40mm thickness Insulated Block Work - (B7.07 71 13.01)-SWL1-B07-D09 | 5d | 2027-12-21 | 2027-12-26 | RHD4CSWL1B07D071076 SS, RHD4ENSWL1APPARC1100, RHD4GNPPSD1100, RHD4ENSDSWL1SUB2000, RHD4ENSDZ6SUBRD220, RHD4ENSDSTL1SUB2000 | -188d |
|  | 37 | **RHD4-02-002-SWL1-B07-Finishes-Doors & Windows** |  |  |  |  |  |
|  | 38 | **RHD4-02-002-SWL1-B07-Finishes-Cement Plastering** |  | 2027-12-21 | 2027-12-26 |  |  |
| RHD4CSWL1B07D091079 |  | Internal Plastering For Walls 15mm - (B7.09 24 00.01)-SWL1-B07-D09 | 5d | 2027-12-21 | 2027-12-26 | RHD4CSWL1B07D091077 SS, RHD4ENSWL1APPARC1100, RHD4GNPPSD1100, RHD4ENSDSWL1SUB2000, RHD4ENSDZ6SUBRD220, RHD4ENSDSTL1SUB2000 | -188d |
| RHD4CSWL1B07D091080 |  | External Plastering for walls 20mm - (B7.09 24 00.02)-SWL1-B07-D09 | 5d | 2027-12-21 | 2027-12-26 | RHD4CSWL1B07D091079 SS, RHD4ENSWL1APPARC1100, RHD4GNPPSD1100, RHD4ENSDSWL1SUB2000, RHD4ENSDZ6SUBRD220, RHD4ENSDSTL1SUB2000 | -188d |
|  | 39 | **RHD4-02-002-SWL1-B07-Finishes-Metal Ladders** |  | 2027-12-21 | 2028-01-08 |  |  |
| RHD4CSWL1B07D051082 |  | Length 5.4m - (B7.05 51 33.06)-SWL1-B07-D05 | 6d | 2027-12-21 | 2027-12-27 | RHD4CSWL1B07D091080 SS, RHD4PRSHLDOSLFS1000, RHD4PRSHLSTAGLFS1000, RHD4ENSWL1APPARC1100, RHD4GNPPSD1100, RHD4ENSDSWL1SUB2000, RHD4ENSDZ6SUBRD220, RHD4ENSDSTL1SUB2000 | -188d |
| RHD4CSWL1B07D051084 |  | Installation of With cage, Length 4.3m - (B7.05 51 33.11)-SWL1-B07-D05 | 5d | 2027-12-28 | 2028-01-02 | RHD4CSWL1B07D051082, RHD4ENSWL1APPARC1100, RHD4GNPPSD1100, RHD4ENSDSWL1SUB2000, RHD4ENSDZ6SUBRD220, RHD4ENSDSTL1SUB2000 | -188d |
| RHD4CSWL1B07D051085 |  | Install Checkered plate - (B7.05 50 00 .01)-SWL1-B07-D05 | 5d | 2028-01-03 | 2028-01-08 | RHD4CSWL1B07D051084, RHD4PRSHLDOSLFS1000, RHD4PRSHLSTAGLFS1000, RHD4ENSWL1APPARC1100, RHD4GNPPSD1100, RHD4ENSDSWL1SUB2000, RHD4ENSDZ6SUBRD220, RHD4ENSDSTL1SUB2000 | -188d |
|  | 40 | **RHD4-02-002-SWL1-B07-Finishes-Painting** |  | 2028-01-09 | 2028-01-13 |  |  |
| RHD4CSWL1B07D091086 |  | Internal Acrylic Paint For Walls Acrylic Paint - (B7.09 91 00.01)-SWL1-B07-D09 | 5d | 2028-01-09 | 2028-01-13 | RHD4CSWL1B07D051085, RHD4PRSHLDOSLFS1500, RHD4PRSHLSTAGLFS1500, RHD4ENSWL1APPARC1100, RHD4GNPPSD1100, RHD4ENSDSWL1SUB2000, RHD4ENSDZ6SUBRD220, RHD4ENSDSTL1SUB2000 | -188d |
| RHD4CSWL1B07D091087 |  | External Acrylic Paint for walls Acrylic Paint - (B7.09 91 00.02)-SWL1-B07-D09 | 5d | 2028-01-09 | 2028-01-13 | RHD4CSWL1B07D091086 SS, RHD4PRSHLDOSLFS1500, RHD4PRSHLSTAGLFS1500, RHD4ENSWL1APPARC1100, RHD4GNPPSD1100, RHD4ENSDSWL1SUB2000, RHD4ENSDZ6SUBRD220, RHD4ENSDSTL1SUB2000 | -188d |
|  | 41 | **RHD4-02-002-SWL1-B07-Finishes-Epoxy Coating** |  | 2028-01-15 | 2028-01-18 |  |  |
| RHD4CSWL1B07D091088 |  | Internal Acrylic Paint For Walls Acrylic Paint - (B7.09 96 56.01)-SWL1-B07-D09 | 4d | 2028-01-15 | 2028-01-18 | RHD4CSWL1B07D091087, RHD4PRSHLDOSLFS1500, RHD4CSWL1B07D151032, RHD4PRSHLSTAGLFS1500, RHD4ENSWL1APPARC1100, RHD4GNPPSD1100, RHD4ENSDSWL1SUB2000, RHD4ENSDZ6SUBRD220, RHD4ENSDSTL1SUB2000 | -188d |
|  | 42 | **RHD4-02-002-SWL1-B07-Mechanical Works** |  | 2027-12-26 | 2028-02-10 |  |  |
|  | 43 | **RHD4-02-002-SWL1-B07-Mechanical Works-Wall mounted Split/AC** |  | 2028-01-19 | 2028-01-31 |  |  |
| RHD4CSWL1B07D151089 |  | Wall mounted Split Air Conditioning Unit. FCU-01 Installation 3.5 kw - (B7.23 81 26.01)-SWL1-B07-D15 | 6d | 2028-01-19 | 2028-01-25 | RHD4CSWL1B07D091088, RHD4PRSHLDOSLFS2200, RHD4PRSHLSTAGLFS2200, RHD4ENSWL1APPMEC1200, RHD4GNPPSD1100, RHD4ENSDSWL1SUB3000, RHD4ENSDZ6SUBRD220, RHD4ENSDSTL1SUB3000 | -188d |
| RHD4CSWL1B07D151090 |  | Wall mounted Split Air Conditioning Unit. FCU-01 Installation 3.5 kw - (B7.23 81 26.01)-SWL1-B07-D15 | 5d | 2028-01-26 | 2028-01-31 | RHD4CSWL1B07D151089, RHD4PRSHLDOSLFS2200, RHD4PRSHLSTAGLFS2200 | -188d |
|  | 44 | **RHD4-02-002-SWL1-B07-Mechanical Works-Portable Fire Extinguishers** |  | 2028-02-01 | 2028-02-10 |  |  |
| RHD4CSWL1B07D151091 |  | Powder fire extinguishers installation - (B7.21 20 00.01)-SWL1-B07-D15 | 5d | 2028-02-01 | 2028-02-06 | RHD4CSWL1B07D151090, RHD4ENSWL1APPMEC1200, RHD4GNPPSD1100, RHD4ENSDSWL1SUB3000, RHD4ENSDZ6SUBRD220, RHD4ENSDSTL1SUB3000 | -188d |
| RHD4CSWL1B07D151092 |  | CO2 fire extinguishers installation - (B7.21 20 00.02)-SWL1-B07-D15 | 4d | 2028-02-07 | 2028-02-10 | RHD4CSWL1B07D151091, RHD4ENSWL1APPMEC1200, RHD4GNPPSD1100, RHD4ENSDSWL1SUB3000, RHD4ENSDZ6SUBRD220, RHD4ENSDSTL1SUB3000 | -188d |
|  | 45 | **RHD4-02-002-SWL1-B07-Mechanical Works-Scupper** |  | 2027-12-26 | 2027-12-28 |  |  |

| ID | WBS | Task | Duration | Start | Finish | Predecessors | Total float |
| --- | --- | --- | --- | --- | --- | --- | --- |
| RHD4CSWL1B07D151093 |  | Scupper with diameter 110mm - Installation - (B7.22 13 19.13.01)-SWL1-B07-D15 | 3d | 2027-12-26 | 2027-12-28 | RHD4CSWL1B07D071076, RHD4CZ2C082TC5200, RHD4CZ2L011SL5200, RHD4ENSWL1APPMEC1200, RHD4GNPPSD1100, RHD4ENSDSWL1SUB3000, RHD4ENSDZ6SUBRD220, RHD4ENSDSTL1SUB3000, RHD4CZ7L03CCTV1500 | -198d |
|  | 46 | **RHD4-02-002-SWL1-B07-Mechanical Works-Pipes, Fittings & Appurtenances** |  | 2027-12-29 | 2028-01-02 |  |  |
| RHD4CSWL1B07D151094 |  | uPVC pipes with diameter 110mm. Roof Slab - (B7.22 13 16.01)-SWL1-B07-D15 | 3d | 2027-12-29 | 2028-01-01 | RHD4CSWL1B07D151093, RHD4PRSHLDOSLFS2100, RHD4PRSHLSTAGLFS2100, RHD4ENSWL1APPMEC1200, RHD4GNPPSD1100, RHD4ENSDSWL1SUB3000, RHD4ENSDZ6SUBRD220, RHD4ENSDSTL1SUB3000, RHD4CZ3C011SL4200 | -198d |
| RHD4CSWL1B07D151095 |  | uPVC pipes with diameter 25mm. Roof Slab - (B7.22 13 16.02)-SWL1-B07-D15 | 4d | 2027-12-29 | 2028-01-02 | RHD4CSWL1B07D151094 SS, RHD4PRSHLDOSLFS2100, RHD4PRSHLSTAGLFS2100, RHD4CZ4C031RD7100, RHD4ENSWL1APPMEC1200, RHD4GNPPSD1100, RHD4ENSDSWL1SUB3000, RHD4ENSDZ6SUBRD220, RHD4ENSDSTL1SUB3000 | -198d |
|  | 47 | **RHD4-02-002-SWL1-B07-Electrical Works** |  | 2027-12-09 | 2028-03-26 |  |  |
|  | 48 | **RHD4-02-002-SWL1-B07-Electrical Works-4Cx 185mm2 CU/XLPE/SWA/PVC** |  | 2027-12-09 | 2027-12-22 |  |  |
| RHD4CSWL1B07D161096 |  | Electrical Conduits and Pull Box Installation for LV Cables 4Cx185 mm²- (B7.26 05 19.01)-SWL1-B07-D16 | 4d | 2027-12-09 | 2027-12-13 | RHD4CSWL1B07D091070, RHD4ENSWL1APPELE1300 | -197d |
| RHD4CSWL1B07D161097 |  | Cable Tray Installation for LV Cables 4Cx185 mm²- (B7.26 05 19.01)-SWL1-B07-D16 | 3d | 2027-12-14 | 2027-12-16 | RHD4CSWL1B07D161096, RHD4ENSWL1APPELE1300 | -197d |
| RHD4CSWL1B07D161098 |  | LV Cable Pulling for LV Cables 4Cx185 mm²- (B7.26 05 19.01)-SWL1-B07-D16 | 2d | 2027-12-18 | 2027-12-19 | RHD4CSWL1B07D161097, RHD4PRSHLDOSLFS2600, RHD4PRSHLSTAGLFS2600 | -197d |
| RHD4CSWL1B07D161099 |  | LV Cable Termination for LV Cables 4Cx185 mm²- (B7.26 05 19.01)-SWL1-B07-D16 | 3d | 2027-12-20 | 2027-12-22 | RHD4CSWL1B07D161098 | -197d |
|  | 49 | **RHD4-02-002-SWL1-B07-Electrical Works-4Cx 70mm2 + 1Cx35mm2 Cu/XLPE/PVC FROM MCC-3 TO LP-01** |  | 2027-12-20 | 2028-01-02 |  |  |
| RHD4CSWL1B07D161100 |  | Electrical Conduits and Pull Box Installation for LV Cables 4Cx95 mm²- (B7.26 05 19.02)-SWL1-B07-D16 | 3d | 2027-12-20 | 2027-12-22 | RHD4CSWL1B07D161099 SS, RHD4ENSWL1APPELE1300 | -197d |
| RHD4CSWL1B07D161101 |  | Cable Tray Installation for LV Cables 4Cx95 mm²- (B7.26 05 19.02)-SWL1-B07-D16 | 2d | 2027-12-23 | 2027-12-25 | RHD4CSWL1B07D161100, RHD4ENSWL1APPELE1300 | -196d |
| RHD4CSWL1B07D161102 |  | LV Cable Pulling for LV Cables 4Cx95 mm²- (B7.26 05 19.02)-SWL1-B07-D16 | 4d | 2027-12-26 | 2027-12-29 | RHD4CSWL1B07D161101, RHD4PRSHLDOSLFS2600, RHD4PRSHLSTAGLFS2600 | -196d |
| RHD4CSWL1B07D161103 |  | LV Cable Termination for LV Cables 4Cx95 mm²- (B7.26 05 19.02)-SWL1-B07-D16 | 3d | 2027-12-30 | 2028-01-02 | RHD4CSWL1B07D161102 | -196d |
|  | 50 | **RHD4-02-002-SWL1-B07-Electrical Works-4Cx 6mm2 + 1Cx6mm2 Cu/XLPE/PVC** |  | 2027-12-23 | 2028-01-09 |  |  |
| RHD4CSWL1B07D161104 |  | Electrical Conduits and Pull Box Installation for LV Cables 4Cx10 mm²- (B7.26 05 19.03)-SWL1-B07-D16 | 3d | 2027-12-23 | 2027-12-26 | RHD4CSWL1B07D161096 SS, RHD4CSWL1B07D161100 | -197d |
| RHD4CSWL1B07D161105 |  | Cable Tray Installation for LV Cables 4Cx10 mm²- (B7.26 05 19.03)-SWL1-B07-D16 | 4d | 2027-12-27 | 2028-01-01 | RHD4CSWL1B07D161104, RHD4CZ4L09RD7100 | -197.02d |
| RHD4CSWL1B07D161106 |  | LV Cable Pulling for LV Cables 4Cx10 mm²- (B7.26 05 19.03)-SWL1-B07-D16 | 3d | 2028-01-01 | 2028-01-04 | RHD4CSWL1B07D161105, RHD4PRSHLDOSLFS2600, RHD4PRSHLSTAGLFS2600 | -197.02d |
| RHD4CSWL1B07D161107 |  | LV Cable Termination for LV Cables 4Cx10 mm²- (B7.26 05 19.03)-SWL1-B07-D16 | 4d | 2028-01-04 | 2028-01-09 | RHD4CSWL1B07D161106, RHD4CSWL1B07D161103, RHD4CSWL1B07D151094, RHD4CSWL1B07D151095 | -197.02d |
|  | 51 | **RHD4-02-002-SWL1-B07-Electrical Works-4Cx 95mm2 + 1Cx50mm2 Cu/XLPE/PVC** |  | 2027-12-29 | 2028-01-11 |  |  |
| RHD4CSWL1B07D161108 |  | Electrical Conduits and Pull Box Installation for LV Cables 4Cx10 mm²+1Cx10 mm²- (B7.26 05 19.05)-SWL1-B07-D16 | 3d | 2027-12-29 | 2028-01-01 | RHD4CSWL1B07D151095 SS, RHD4ENSWL1APPELE1300, RHD4CSWL1B07D161104 | -198d |
| RHD4CSWL1B07D161109 |  | Cable Tray Installation for LV Cables 4Cx10 mm²+1Cx10 mm²- (B7.26 05 19.05)-SWL1-B07-D16 | 4d | 2028-01-02 | 2028-01-05 | RHD4CSWL1B07D161108, RHD4CZ1CH1ST1200, RHD4CZ4C031CCTV6100, RHD4CSWL1B07D031205 | -198d |
| RHD4CSWL1B07D161110 |  | LV Cable Pulling for LV Cables 4Cx10 mm²+1Cx10 mm²- (B7.26 05 19.05)-SWL1-B07-D16 | 3d | 2028-01-06 | 2028-01-09 | RHD4CSWL1B07D161109, RHD4PRSHLDOSLFS2600, RHD4PRSHLSTAGLFS2600, RHD4CZ1L101SL1500, RHD4CZ4L014SL1300, RHD4CZ6RA01CCTV5200, RHD4CZ6A02RD7100, RHD4CZ1B03BF2000 | -198d |
| RHD4CSWL1B07D161111 |  | LV Cable Termination for LV Cables 4Cx10 mm²+1Cx10 mm²- (B7.26 05 19.05)-SWL1-B07-D16 | 2d | 2028-01-10 | 2028-01-11 | RHD4CSWL1B07D161110, RHD4CSWL1B07D161107 | -198d |
|  | 52 | **RHD4-02-002-SWL1-B07-Electrical Works-4Cx 4mm2 + 1Cx4mm2 Cu/XLPE/PVC** |  |  |  |  |  |
|  | 53 | **RHD4-02-002-SWL1-B07-Electrical Works-Wiring Devices** |  | 2028-01-12 | 2028-01-20 |  |  |
| RHD4CSWL1B07D161116 |  | 13A Signle Socket Outlet WP for Wiring Devices - (B7.26 27 26 .01)-SWL1-B07-D16 | 3d | 2028-01-12 | 2028-01-15 | RHD4CSWL1B07D161110, RHD4CSWL1B07D161106, RHD4CSWL1B07D161102, RHD4PRSHLDOSLFS2800, RHD4PRSHLSTAGLFS2800, RHD4PRSHLDOSLFS2600, RHD4PRSHLSTAGLFS2600, RHD4CSWL1B07D161111, RHD4ENSWL1APPELE1300, RHD4CSWL1B07D161108, RHD4CZ2L011SL1500, RHD4CZ2L011LV4300, RHD4CZ1C081SL1500, RHD4CZ5C061TC2400, RHD4GNLVZ1FT1500, RHD4GNLVZ3FT1500, RHD4GNTCZ6FT1800, RHD4GNLVZ8FT1500 | -198d |
| RHD4CSWL1B07D161117 |  | 13A Double Socket Outlet WP for Wiring Devices - (B7.26 27 26 .02)-SWL1-B07-D16 | 2d | 2028-01-16 | 2028-01-17 | RHD4CSWL1B07D161116, RHD4PRSHLDOSLFS2800, RHD4PRSHLSTAGLFS2800, RHD4CZ1L101ICT5200, RHD4CZ2L011TC2400, RHD4CZ7RA03LV4300, RHD4CZ4L09SL5200, RHD4CZ8L04CCTV1500 | -198d |
| RHD4CSWL1B07D161118 |  | 25A Switch Socket Outlet (for Split Unit), WP for Wiring Devices - (B7.26 27 26 .03)-SWL1-B07-D16 | 3d | 2028-01-18 | 2028-01-20 | RHD4CSWL1B07D161117, RHD4PRSHLDOSLFS2800, RHD4PRSHLSTAGLFS2800, RHD4CZ2L011ICT2400, RHD4CZ2L102LV3400, RHD4CZ7RA03CCTV2100, RHD4CZ4A013ICT2400, RHD4CZ4BZ4BF4001, RHD4CZ2B05BF2001 | -198d |
|  | 54 | **RHD4-02-002-SWL1-B07-Electrical Works-Grounding and Bonding** |  | 2028-01-18 | 2028-02-01 |  |  |
| RHD4CSWL1B07D161119 |  | Copper Conductor Connecting to Steel Rebar Installation for Copper Rods - (B7.26 05 26.01)-SWL1-B07-D16 | 4d | 2028-01-18 | 2028-01-22 | RHD4CSWL1B07D161118 SS, RHD4ENSWL1APPELE1300, RHD4PRSHLDOSLFS2500, RHD4PRSHLSTAGLFS2500 | -198d |
| RHD4CSWL1B07D161120 |  | Earth pits Installation for Copper Rods - (B7.26 05 26.01)-SWL1-B07-D16 | 4d | 2028-01-23 | 2028-01-26 | RHD4CSWL1B07D161119, RHD4CSWL1B07D161118, RHD4CZ6RA01RD8100, RHD4CZ7RA05ICT2400, RHD4CZ9B36BF2000 | -198d |
| RHD4CSWL1B07D161121 |  | Earth Bars Installation for Copper Rods - (B7.26 05 26.01)-SWL1-B07-D16 | 2d | 2028-01-27 | 2028-01-29 | RHD4CSWL1B07D161120, RHD4CZ4CH5ST1320 | -198d |
| RHD4CSWL1B07D161122 |  | Copper Tape on Roof Installation for Copper Rods - (B7.26 05 26.01)-SWL1-B07-D16 | 3d | 2028-01-30 | 2028-02-01 | RHD4CSWL1B07D161121, RHD4CZ7L03MV5400, RHD4CZ6C052ICT2400, RHD4CZ5RA07RD9200 | -198d |
|  | 55 | **RHD4-02-002-SWL1-B07-Electrical Works-Indoor Lighting Fixtures** |  | 2028-01-30 | 2028-02-15 |  |  |
| RHD4CSWL1B07D161123 |  | Electrical Conduits and Pull Box Installation - 24.5 W for Lighting Fixtures - (Indoor Lighting Fixtures )-SWL1-B07-D16 | 3d | 2028-01-30 | 2028-02-01 | RHD4CSWL1B07D161122 SS, RHD4ENSWL1APPELE1300 | -196d |
| RHD4CSWL1B07D161124 |  | LV Cable Pulling for Lighting Fixtures - (B7.26 51 00.01)-SWL1-B07-D16 | 3d | 2028-02-02 | 2028-02-05 | RHD4CSWL1B07D161123, RHD4CSWL1B07D161122, RHD4GNSLZ8FT1600, RHD4CZ1L101RW3000, RHD4GNLVZ7FT1500 | -196d |
| RHD4CSWL1B07D161126 |  | Electrical Conduits and Pull Box Installation - 8 W for Lighting Fixtures - (B7.26 51 00.02)-SWL1-B07-D16 | 3d | 2028-02-02 | 2028-02-05 | RHD4CSWL1B07D161123 | -196d |
| RHD4CSWL1B07D161125 |  | Lighting Fixture Installation for Lighting Fixtures - (B7.26 51 00.01)-SWL1-B07-D16 | 4d | 2028-02-06 | 2028-02-09 | RHD4CSWL1B07D161124, RHD4PRSHLDOSLFS2700, RHD4PRSHLSTAGLFS2700, RHD4CZ3C083RD5100, RHD4CZ9L02CCTV1500 | -196d |
| RHD4CSWL1B07D161127 |  | LV Cable Pulling for Lighting Fixtures - (B7.26 51 00.02)-SWL1-B07-D16 | 4d | 2028-02-06 | 2028-02-09 | RHD4CSWL1B07D161126 | -196d |
| RHD4CSWL1B07D161128 |  | Lighting Fixture Installation for Lighting Fixtures - (B7.26 51 00.02)-SWL1-B07-D16 | 5d | 2028-02-10 | 2028-02-15 | RHD4CSWL1B07D161127, RHD4PRSHLDOSLFS2700, RHD4CSWL1B07D161125, RHD4PRSHLSTAGLFS2700, RHD4CZ5L08RD7100 | -196d |
|  | 56 | **RHD4-02-002-SWL1-B07-Electrical Works-Outdoor Lighting Fixtures** |  | 2028-02-12 | 2028-03-06 |  |  |
| RHD4CSWL1B07D161129 |  | Electrical Conduits and Pull Box Installation - 7 W for Lighting Fixtures - (Outdoor Lighting Fixtures )-SWL1-B07-D16 | 4d | 2028-02-12 | 2028-02-15 | RHD4CSWL1B07D161128 SS, RHD4ENSWL1APPELE1300, RHD4CSWL1B07D161126, RHD4CSWL1B07D151092 | -188d |
| RHD4CSWL1B07D161130 |  | LV Cable Pulling for Lighting Fixtures - (B7.26 56 00.01)-SWL1-B07-D16 | 3d | 2028-02-16 | 2028-02-19 | RHD4CSWL1B07D161129 | -185d |
| RHD4CSWL1B07D161132 |  | Electrical Conduits and Pull Box Installation - 42.5 W for Lighting Fixtures - (B7.26 56 00.02)-SWL1-B07-D16 | 4d | 2028-02-16 | 2028-02-20 | RHD4CSWL1B07D161129 | -188d |
| RHD4CSWL1B07D161131 |  | Lighting Fixture Installation for Lighting Fixtures - (B7.26 56 00.01)-SWL1-B07-D16 | 3d | 2028-02-20 | 2028-02-23 | RHD4CSWL1B07D161130, RHD4ENSWL1APPELE1300, RHD4PRSHLDOSLFS2700, RHD4PRSHLSTAGLFS2700 | -185d |
| RHD4CSWL1B07D161133 |  | LV Cable Pulling for Lighting Fixtures - (B7.26 56 00.02)-SWL1-B07-D16 | 5d | 2028-02-21 | 2028-03-01 | RHD4CSWL1B07D161132 | -188d |
| RHD4CSWL1B07D161134 |  | Lighting Fixture Installation for Lighting Fixtures - (B7.26 56 00.02)-SWL1-B07-D16 | 4d | 2028-03-02 | 2028-03-06 | RHD4CSWL1B07D161133, RHD4ENSWL1APPELE1300, RHD4PRSHLDOSLFS2700, RHD4CSWL1B07D161131, RHD4PRSHLSTAGLFS2700 | -188d |
|  | 57 | **RHD4-02-002-SWL1-B07-Electrical Works- Enclosed Switches and Circuit Breakers** |  | 2028-01-30 | 2028-02-10 |  |  |
| RHD4CSWL1B07D161135 |  | 25-amp single-pole disconnect switches for Lighting Fixtures - (B7.26 28 16.01)-SWL1-B07-D16 | 3d | 2028-01-30 | 2028-02-01 | RHD4CSWL1B07D161122 SS, RHD4ENSWL1APPELE1300, RHD4PRSHLDOSLFS2900, RHD4PRSHLSTAGLFS2900, RHD4CZ7L03MV3401, RHD4CZ7L03MV3400 | -198d |
| RHD4CSWL1B07D161136 |  | 25-amp three-pole disconnect switches for Lighting Fixtures - (B7.26 28 16.02)-SWL1-B07-D16 | 4d | 2028-02-02 | 2028-02-06 | RHD4CSWL1B07D161135, RHD4ENSWL1APPELE1300, RHD4PRSHLDOSLFS2900, RHD4PRSHLSTAGLFS2900, RHD4CZ2L011RD8100, RHD4CZ2L011RD7100, RHD4CZ6RA01RD9100 | -198d |
| RHD4CSWL1B07D161137 |  | 125-amp three-pole disconnect switches for Lighting Fixtures - (B7.26 28 16.03)-SWL1-B07-D16 | 4d | 2028-02-07 | 2028-02-10 | RHD4CSWL1B07D161136, RHD4ENSWL1APPELE1300, RHD4PRSHLDOSLFS2900, RHD4PRSHLSTAGLFS2900, RHD4CZ3L122ICT2400, RHD4CZ7RA05RD8100 | -198d |
|  | 58 | **RHD4-02-002-SWL1-B07-Electrical Works-Secondery Panel Boards** |  | 2028-02-07 | 2028-02-21 |  |  |
| RHD4CSWL1B07D161138 |  | Panel "DB-U3" Installation for Panelboards - (B7.26 24 16.01)-SWL1-B07-D16 | 2d | 2028-02-07 | 2028-02-08 | RHD4CSWL1B07D161137 SS, RHD4ENSWL1APPELE1300, RHD4PRSHLDOSLFS2400, RHD4PRSHLSTAGLFS2400 | -198d |
| RHD4CSWL1B07D161139 |  | Panel "DB-U3" Termination for Panelboards - (B7.26 24 16.01)-SWL1-B07-D16 | 4d | 2028-02-09 | 2028-02-13 | RHD4CSWL1B07D161138, RHD4CZ6A015RD7100 | -198d |
| RHD4CSWL1B07D161140 |  | Panel "LPP-UT-3" Installation for Panelboards - (B7.26 24 16.02)-SWL1-B07-D16 | 4d | 2028-02-14 | 2028-02-17 | RHD4CSWL1B07D161139, RHD4ENSWL1APPELE1300, RHD4PRSHLDOSLFS2400, RHD4PRSHLSTAGLFS2400, RHD4CZ7C013ICT2400, RHD4CZ9L05ICT2400, RHD4CZ4C012RD7100, RHD4CZ6C052RD7100, RHD4CZ7RA05RD7100, RHD4GNCCTVZ1FT2000 | -198d |
| RHD4CSWL1B07D161141 |  | Panel "DB-UT-3" Termination for Panelboards - (B7.26 24 16.02)-SWL1-B07-D16 | 3d | 2028-02-19 | 2028-02-21 | RHD4CSWL1B07D161140, RHD4CZ7C013RD7100, RHD4GNCCTVZ6FT2000, RHD4CZ7L03RD7100, RHD4CZ9L06RD7100, RHD4HOASZ4APPSL170 | -198d |
|  | 60 | **RHD4-02-002-SWL1-B07-Electrical Works-Addressable Fire-Alarm System** |  | 2028-02-19 | 2028-03-15 |  |  |
| RHD4CSWL1B07D161145 |  | 1 loop FACP with charger, battries and auto dialer for Fire Alarm - (B7.28 46 00.01)-SWL1-B07-D16 | 4d | 2028-02-19 | 2028-02-23 | RHD4CSWL1B07D161141 SS, RHD4ENSWL1APPELE1300, RHD4PRSHLDOSLFS3000, RHD4PRSHLSTAGLFS3000, RHD4CSWL1B07D161128 | -198d |
| RHD4CSWL1B07D161146 |  | Addressable type fire alarm Photoelectric smoke detector complete for Fire Alarm - (B7.28 46 00.05)-SWL1-B07-D16 | 4d | 2028-02-24 | 2028-03-02 | RHD4CSWL1B07D161145, RHD4CZ2L102RW3002 FF, RHD4CZ4L01RD7100, RHD4CZ8L04SL1500, RHD4CZ3C011SL6100 | -198d |
| RHD4CSWL1B07D161147 |  | Addressable type fire alarm manual call station/pull station for Fire Alarm - (B7.28 46 00.06)-SWL1-B07-D16 | 3d | 2028-03-04 | 2028-03-06 | RHD4CSWL1B07D161146, RHD4CZ5RA07CCTV1500 FF, RHD4CZ3BZ3BF2001 | -198d |
| RHD4CSWL1B07D161148 |  | Conventional 24V DC fire alarm wall mounted 15cd flasher/strobe. for Fire Alarm - (B7.28 46 00.07)-SWL1-B07-D16 | 3d | 2028-03-07 | 2028-03-09 | RHD4CSWL1B07D161147, RHD4CZ8RA04CCTV6100, RHD4CZ5C061CCTV6100, RHD4CZ3C011SL1500 | -198d |
| RHD4CSWL1B07D161149 |  | Conventional 24V DC fire alarm wall mounted 15cd flasher weather proof for Fire Alarm - (B7.28 46 00.08)-SWL1-B07-D16 | 3d | 2028-03-11 | 2028-03-13 | RHD4CSWL1B07D161148, RHD4GNSLZ7FT1600, RHD4CZ7RA03CCTV1500 | -198d |
| RHD4CSWL1B07D161150 |  | Short CCT Isolator. for Fire Alarm - (B7.28 46 00.09)-SWL1-B07-D16 | 2d | 2028-03-14 | 2028-03-15 | RHD4CSWL1B07D161149, RHD4CSWL1B07D161134 SS, RHD4CZ8C014RD7100 | -198d |
|  | 61 | **RHD4-02-002-SWL1-B07-Electrical Works-Main Motor Control Center (MCC)** |  | 2028-03-14 | 2028-03-20 |  |  |
| RHD4CSWL1B07D161151 |  | Installation for MCC-3 - (B7.26 29 00.01)-SWL1-B07-D16 | 4d | 2028-03-14 | 2028-03-18 | RHD4CSWL1B07D161150 SS, RHD4ENSWL1APPELE1300, RHD4PRSHLDOSLFS2300, RHD4PRSHLSTAGLFS2300, RHD4CZ8RA04RD3200 | -198d |
| RHD4CSWL1B07D161152 |  | Termination for MCC-3 - (B7.26 29 00.01)-SWL1-B07-D16 | 2d | 2028-03-19 | 2028-03-20 | RHD4CSWL1B07D161151, RHD4ENSWL1APPELE1300, RHD4CSWL1B07D161134, RHD4CZ1C081CCTV1500 | -198d |
|  | 62 | **RHD4-02-002-SWL1-B07-Electrical Works-Programmable Logic Controllers** |  | 2028-03-19 | 2028-03-26 |  |  |
| RHD4CSWL1B07D161153 |  | PLC System Installation for - (B7.40 63 43.01)-SWL1-B07-D16 | 3d | 2028-03-19 | 2028-03-21 | RHD4CSWL1B07D161152 SS, RHD4ENSWL1APPELE1300, RHD4PRLOLSTAGLFS1700, RHD4CZ1L101CCTV1500 | -198d |

| ID | WBS | Task | Duration | Start | Finish | Predecessors | Complete | Total float |
| --- | --- | --- | --- | --- | --- | --- | --- | --- |
| RHD4CSWL1B07D161154 |  | Process Control Wiring Installation for - (B7.40 67 10.01)-SWL1-B07-D16 | 3d | 2028-03-19 | 2028-03-21 | RHD4CSWL1B07D161153 SS, RHD4ENSWL1APPELE1300, RHD4PRLOLSTAGLFS1700 |  | -198d |
| RHD4CSWL1B07D161155 |  | Instrumentation for Process Systems for - (B7.40 70 00.01)-SWL1-B07-D16 | 4d | 2028-03-22 | 2028-03-26 | RHD4CSWL1B07D161154, RHD4ENSWL1APPELE1300, RHD4PRLOLSTAGLFS1700, RHD4CZ9L05RD7100, RHD4CZ5C061RD7100, RHD4CZ5C061RD8100, RHD4CZ5RA07CCTV6100, RHD4CZ7L131RD7100 |  | -198d |
|  | 5 | **RHD4-02-002-Sewage Lift Station 01-Wet Well Structure And Valve Chamber** |  | 2026-10-20 | 2027-12-06 |  |  |  |
|  | 16 | **RHD4-02-002-SWL1-B07-Pump Lifting System** |  | 2027-11-01 | 2027-12-06 |  |  |  |
|  | 17 | **RHD4-02-002-SWL1-B07-Ductile Pipe Connection and Fittings-Pipes, Fittings & Appurtenances** |  | 2027-11-01 | 2027-11-18 |  |  |  |
| RHD4CSWL1B07D151027 |  | Buried ductile iron pipes with diameter 400 mm Installation - (B7.22 11 13.03)-SWL1-B07-D15 | 4d | 2027-11-01 | 2027-11-06 | RHD4PRSHLDOSLFS1700, RHD4PRSHLSTAGLFS1700, RHD4PRLOLSTAGLFS1100, RHD4CSWL1B07D151023, RHD4ENSWL1APPMEC1200, RHD4GNPPSD1100, RHD4ENSDSWL1SUB3000, RHD4ENSDZ6SUBRD220, RHD4ENSDSTL1SUB3000 |  | -154.02d |
| RHD4CSWL1B07D151029 |  | Buried ductile iron pipes with diameter 250 mm Installation - (B7.22 11 13.05)-SWL1-B07-D15 | 5d | 2027-11-06 | 2027-11-11 | RHD4CTUN1Z5STG21390, RHD4CSWL1B07D151027 |  | -154.02d |
| RHD4CSWL1B07D151030 |  | Double flanged ductile iron pipe with diameter 250 mm Installation - (B7.22 11 13.06)-SWL1-B07-D15 | 6d | 2027-11-11 | 2027-11-18 | RHD4CSWL1B07D151029 |  | -154.02d |
|  | 18 | **RHD4-02-002-SWL1-B07-Ductile Pipe Connection and Fittings-Isolation Penstock** |  | 2027-11-18 | 2027-12-01 |  |  |  |
| RHD4CSWL1B07D151031 |  | Install Electrically operated penstock 500 * 500 mm - (B7.35 21 23.01)-SWL1-B07-D15 | 11d | 2027-11-18 | 2027-12-01 | RHD4PRLOLSTAGLFS2000, RHD4PRSHLDOSLFS1700, RHD4PRSHLSTAGLFS1700, RHD4PRLOLSTAGLFS1100, RHD4CSWL1B07D151030, RHD4ENSWL1APPMEC1200, RHD4GNPPSD1100, RHD4ENSDSWL1SUB3000, RHD4ENSDZ6SUBRD220, RHD4ENSDSTL1SUB3000 |  | -154.02d |
|  | 19 | **RHD4-02-002-SWL1-B07-Ductile Pipe Connection and Fittings-JIB Crane** |  | 2027-12-01 | 2027-12-06 |  |  |  |
| RHD4CSWL1B07D151032 |  | Install JIB Crane For storm and sewer pumping Stations - (B7.41 22 10.01)-SWL1-B07-D15 | 4d | 2027-12-01 | 2027-12-06 | RHD4CSWL1B07D151031, RHD4CSWL1B07D151030, RHD4CTUN1Z5STG21380, RHD4PRLOLSTAGLFS1500, RHD4CSWL1B07D151023, RHD4PRSHLDOSLFS1800, RHD4PRSHLSTAGLFS1800, RHD4ENSWL1APPMEC1200, RHD4GNPPSD1100, RHD4ENSDSWL1SUB3000, RHD4ENSDZ6SUBRD220, RHD4ENSDSTL1SUB3000 |  | -154.02d |
|  | 6 | **RHD4-02-002-SWL1-B07-Wet Well Structure And Valve Chamber** |  | 2026-10-20 | 2027-11-01 |  |  |  |
|  | 10 | **RHD4-02-002-SWL1-B07-WET WELL-Metal Doors** |  | 2027-09-11 | 2027-09-18 |  |  |  |
| RHD4CSWL1B07D051014 |  | metal floor door size (1000x1000mm) for Wet well structure - (B7.08 31 13.04)-SWL1-B07-D05 | 6d | 2027-09-11 | 2027-09-18 | RHD4PRSHLDOSLFS1400, RHD4PRSHLSTAGLFS1400, RHD4CSWL1B07D091012, RHD4PRSHLDOSLFS1500, RHD4PRSHLSTAGLFS1500, RHD4ENSWL1APPARC1100, RHD4GNPPSD1100, RHD4ENSDSWL1SUB2000, RHD4ENSDZ6SUBRD220, RHD4ENSDSTL1SUB2000 |  | -154.02d |
|  | 11 | **RHD4-02-002-SWL1-B07-WET WELL-Screening Container** |  | 2027-09-18 | 2027-09-26 |  |  |  |
| RHD4CSWL1B07D151016 |  | Steel Container Screening Installation - (B7.46 21 00.01)-SWL1-B07-D15 | 6d | 2027-09-18 | 2027-09-26 | RHD4PRLOLSTAGLFS1000, RHD4CSWL1B07D051014, RHD4PRSHLDOSLFS1400, RHD4PRSHLSTAGLFS1400, RHD4ENSWL1APPARC1100, RHD4GNPPSD1100, RHD4ENSDSWL1SUB2000, RHD4ENSDZ6SUBRD220, RHD4ENSDSTL1SUB2000, RHD4ENSWL1APPMEC1200, RHD4ENSDSWL1SUB3000, RHD4ENSDSTL1SUB3000 |  | -154.02d |
|  | 12 | **RHD4-02-002-SWL1-B07-WET WELL-Motorized basket screen** |  | 2027-09-26 | 2027-10-11 |  |  |  |
| RHD4CSWL1B07D151017 |  | Basket Screen Frame Mounting - (B7.46 21 00.01)-SWL1-B07-D15 | 4d | 2027-09-26 | 2027-09-30 | RHD4CSWL1B07D151016, RHD4PRSHLDOSLFS1900, RHD4PRSHLSTAGLFS1900 |  | -154.02d |
| RHD4CSWL1B07D151018 |  | Basket Screen Alignment - (B7.46 21 01.01)-SWL1-B07-D15 | 5d | 2027-09-30 | 2027-10-06 | RHD4CSWL1B07D151017, RHD4PRSHLDOSLFS1900, RHD4PRSHLSTAGLFS1900 |  | -154.02d |
| RHD4CSWL1B07D151019 |  | Motor and Drive System Installation - (B7.46 21 01.01)-SWL1-B07-D15 | 4d | 2027-10-06 | 2027-10-11 | RHD4CSWL1B07D151018 |  | -154.02d |
|  | 13 | **RHD4-02-002-SWL1-B07-WET WELL-Pumps** |  | 2027-10-11 | 2027-10-23 |  |  |  |
| RHD4CSWL1B07D151021 |  | Constant Speed Submersible pump Installation - 53 lps - (B7. 22 14 29.16.02)-SWL1-B07-D15 | 10d | 2027-10-11 | 2027-10-23 | RHD4PRLOLSTAGLFS1100, RHD4CSWL1B07D151019, RHD4ENSWL1APPMEC1200, RHD4GNPPSD1100, RHD4ENSDSWL1SUB3000, RHD4ENSDZ6SUBRD220, RHD4ENSDSTL1SUB3000 |  | -154.02d |
|  | 14 | **RHD4-02-002-SWL1-B07-WET WELL-Gate Valves** |  | 2027-10-23 | 2027-11-01 |  |  |  |
| RHD4CSWL1B07D151023 |  | Manually operated Gate Valve DN250 for - (B7.22 05 23.02)-SWL1-B07-D15 | 8d | 2027-10-23 | 2027-11-01 | RHD4PRSHLDOSLFS1800, RHD4PRSHLSTAGLFS1800, RHD4CSWL1B07D151021, RHD4ENSWL1APPMEC1200, RHD4GNPPSD1100, RHD4ENSDSWL1SUB3000, RHD4ENSDZ6SUBRD220, RHD4ENSDSTL1SUB3000 |  | -154.02d |
|  | 15 | **RHD4-02-002-SWL1-B07-WET WELL-Butterfly Valve.** |  |  |  |  |  |  |
|  | 7 | **RHD4-02-002-SWL1-B07-WET WELL-Concrete works** |  | 2026-10-20 | 2027-08-05 |  |  |  |
| RHD4CSWL1B07D021002 |  | Lean Concrete for Wet well structure - (B7.03 00 00 .01)-SWL1-B07-D02 | 4d | 2026-10-20 A | 2026-10-24 A | RHD4ENSWL1APPSTC1000, RHD4CZ6C062SW2200, RHD4CZ2L102ST8500, RHD4CZ4A013ST3501, RHD4CZ5L07ST2500, RHD4CZ5L08ST7500, RHD4CZ5L08ST3500, RHD4CZ5L08ST3502, RHD4CZ5C061SW5200, RHD4CZ6A02SW3500, RHD4CZ6A02ST7500, RHD4CZ6A02ST1500, RHD4CZ6A02ST3500, RHD4CZ6C052ST4600, RHD4CZ6C052ST8500, RHD4CZ6A015ST4600, RHD4ENMARAPPEW100, RHD4CTUN1Z5STG31240 | 100% |  |
| RHD4CSWL1B07D021003 |  | Water proofing membrance for Wet well structure - (B7.07 13 13.01)-SWL1-B07-D02 | 2d | 2027-04-24 | 2027-04-25 | RHD4CSWL1B07D021002, RHD4PRSHLDOSLFS1200, RHD4PRSHLSTAGLFS1200, RHD4CZ5RA07PT3200, RHD4CZ5RA07SW2500, RHD4CZ5RA07SW3500, RHD4CZ5C051ST7500, RHD4CZ6C062ST2500 |  | -146d |
| RHD4CSWL1B07D021004 |  | Screed for Wet well structure - (B7.03 00 00 .04)-SWL1-B07-D02 | 4d | 2027-04-26 | 2027-04-29 | RHD4CSWL1B07D021003, RHD4CZ4A013ST1503, RHD4CZ6C052ST7500, RHD4CZ6C052ST2500 |  | -146d |
| RHD4CSWL1B07D021005 |  | Steel Fixing for Wet well structure - (B7.03 00 00 .05)-SWL1-B07-D02 | 8d | 2027-07-11 | 2027-07-19 | RHD4CSWL1B07D021004, RHD4ENSWL1APPSTC1000, RHD4CZ3L122ST5400, RHD4CZ4L014ST2500, RHD4CZ4C031ST8500, RHD4CZ5A014ST2500, RHD4CZ5C061SW3501, RHD4CZ5RA07PT3203, RHD4CZ5RA07PT4500, RHD4CZ5RA07PT3202, RHD4CZ6A02LV2400, RHD4CZ6C062ST7500 |  | -150d |
| RHD4CSWL1B07D021006 |  | Formwork for Wet well structure - (B7.03 00 00 .05)-SWL1-B07-D02 | 6d | 2027-07-20 | 2027-07-26 | RHD4CSWL1B07D021005, RHD4ENSWL1APPSTC1000, RHD4CZ1C081ST8500, RHD4CZ1C081ST3501, RHD4CZ7L015ST1402, RHD4CZ4L014ST3501, RHD4CZ4L01MV2400, RHD4CZ4L01PT4500, RHD4CZ5A014ST8500, RHD4CZ5L08PT3203, RHD4CZ5L08SW3500, RHD4CZ5C051PT3200, RHD4CZ5C051SW3500, RHD4CZ6C052SW3500, RHD4CZ6C052ST3500, RHD4CZ6C052ST3501, RHD4CZ6C062ST3501 |  | -150d |
| RHD4CSWL1B07D021007 |  | RC Casting for Wet well structure - (B7.03 00 00 .05)-SWL1-B07-D02 | 4d | 2027-08-01 | 2027-08-05 | RHD4CSWL1B07D021006, RHD4ENSWL1APPSTC1000, RHD4CZ1L101ST7500, RHD4CZ8L04ST1508, RHD4CZ4C031ST7500, RHD4CZ4C031ST3501, RHD4CZ4A013SL2400, RHD4CZ4L01SL2400, RHD4CZ4L01RD1100, RHD4CZ5L08SW6100, RHD4CZ5C061IRR1502, RHD4CZ5C061PT3202, RHD4CZ6A02PT4500, RHD4CZ6A02PT3200, RHD4CZ6C062IRR3200 |  | -154.02d |
|  | 8 | **RHD4-02-002-SWL1-B07-WET WELL-Retaining Walls & Slab** |  | 2027-08-05 | 2027-09-05 |  |  |  |
| RHD4CSWL1B07D021008 |  | Steel Fixing for Wet well structure - (B7.03 00 00 .07)-SWL1-B07-D02 | 8d | 2027-08-05 | 2027-08-15 | RHD4CSWL1B07D021007 |  | -154.02d |
| RHD4CSWL1B07D021009 |  | Formwork for Wet well structure - (B7.03 00 00 .07)-SWL1-B07-D02 | 5d | 2027-08-15 | 2027-08-21 | RHD4CSWL1B07D021008 |  | -154.02d |
| RHD4CSWL1B07D021010 |  | RC Casting for Wet well structure - (B7.03 00 00 .07)-SWL1-B07-D02 | 9d | 2027-08-21 | 2027-08-31 | RHD4CSWL1B07D021009 |  | -154.02d |
| RHD4CSWL1B07D021011 |  | Water protection Board membrance for Wet well structure - (B7.07 13 13.02)-SWL1-B07-D02 | 4d | 2027-08-31 | 2027-09-05 | RHD4CSWL1B07D021010, RHD4PRSHLDOSLFS1200, RHD4PRSHLSTAGLFS1200 |  | -154.02d |
|  | 9 | **RHD4-02-002-SWL1-B07-WET WELL-Finishes** |  | 2027-09-05 | 2027-09-11 |  |  |  |
| RHD4CSWL1B07D091012 |  | Epoxy Coating for Wet well structure - (B7.09 96 56.01)-SWL1-B07-D09 | 5d | 2027-09-05 | 2027-09-11 | RHD4CSWL1B07D021011, RHD4PRSHLDOSLFS1600, RHD4PRSHLSTAGLFS1600, RHD4ENSWL1APPARC1100, RHD4GNPPSD1100, RHD4ENSDSWL1SUB2000, RHD4ENSDZ6SUBRD220, RHD4ENSDSTL1SUB2000 |  | -154.02d |
|  | 63 | **RHD4-02-002-Sewage Lift Station 01-Site Works** |  | 2027-12-26 | 2028-04-09 |  |  |  |
|  | 64 | **RHD4-02-002-SWL1-B07-FENCE & GATES** |  | 2027-12-26 | 2028-01-15 |  |  |  |
|  | 65 | **RHD4-02-002-SWL1-B07-FENCE & GATES-Perimeter Fencing** |  | 2027-12-26 | 2028-01-10 |  |  |  |
| RHD4CSWL1B07D101158 |  | Chain Link Fence - North Side Installation - (B1.32 31 00.01)-SWL1-B07-D10 | 3d | 2027-12-26 | 2027-12-28 | RHD4CSWL1B07D071076, RHD4PRSHLSTAGLFS3100, RHD4ENSWL1APPARC1100, RHD4GNPPSD1100, RHD4ENSDSWL1SUB2000, RHD4ENSDZ6SUBRD220, RHD4ENSDSTL1SUB2000 |  | -197d |
| RHD4CSWL1B07D101159 |  | Chain Link Fence - South Side Installation - (B1.32 31 00.01)-SWL1-B07-D10 | 3d | 2027-12-29 | 2028-01-01 | RHD4CSWL1B07D101158, RHD4PRSHLSTAGLFS3100 |  | -185d |
| RHD4CSWL1B07D101160 |  | Chain Link Fence - West Side Installation - (B1.32 31 00.01)-SWL1-B07-D10 | 4d | 2028-01-02 | 2028-01-05 | RHD4CSWL1B07D101159, RHD4PRSHLSTAGLFS3100 |  | -185d |
| RHD4CSWL1B07D101161 |  | Chain Link Fence - East Side Installation - (B1.32 31 00.01)-SWL1-B07-D10 | 4d | 2028-01-06 | 2028-01-10 | RHD4CSWL1B07D101160, RHD4PRSHLSTAGLFS3100 |  | -185d |
|  | 66 | **RHD4-02-002-SWL1-B07-FENCE & GATES-Entrance Gates** |  | 2028-01-11 | 2028-01-15 |  |  |  |
| RHD4CSWL1B07D101162 |  | Main Entrance Gate Installation - (B1.32 31 00.01)-SWL1-B07-D10 | 4d | 2028-01-11 | 2028-01-15 | RHD4CSWL1B07D101161 |  | -185d |
|  | 67 | **RHD4-02-002-SWL1-B07-FLOW METER CHAMABER** |  | 2028-01-11 | 2028-04-01 |  |  |  |
|  | 68 | **RHD4-02-002-SWL1-B07-FLOW METER CHAMABER-Concrete works** |  | 2028-01-11 | 2028-02-01 |  |  |  |
| RHD4CSWL1B07D031165 |  | Lean Concrete 100mm - (B7.03 00 00 .01)-SWL1-B07-D03 | 3d | 2028-01-11 | 2028-01-13 | RHD4CSWL1B07D101162 SS |  | -185d |
| RHD4CSWL1B07D031166 |  | Water proofing membrance Bituminous Sheet - (B7.07 13 13.01)-SWL1-B07-D03 | 4d | 2028-01-15 | 2028-01-18 | RHD4CSWL1B07D031165, RHD4PRSHLDOSLFS1200, RHD4PRSHLSTAGLFS1200 |  | -185d |
| RHD4CSWL1B07D031167 |  | Screed 50mm - (B7.03 00 00 .04)-SWL1-B07-D03 | 4d | 2028-01-19 | 2028-01-23 | RHD4CSWL1B07D031166 |  | -185d |
| RHD4CSWL1B07D031168 |  | Steel Fixing - (B7.03 00 00 .05)-SWL1-B07-D03 | 3d | 2028-01-24 | 2028-01-26 | RHD4CSWL1B07D031167, RHD4ENSWL1APPSTC1000 |  | -185d |
| RHD4CSWL1B07D031169 |  | Formwork - (B7.03 00 00 .05)-SWL1-B07-D03 | 3d | 2028-01-27 | 2028-01-30 | RHD4CSWL1B07D031168, RHD4ENSWL1APPSTC1000 |  | -185d |
| RHD4CSWL1B07D031170 |  | RC Casting Fluid-Applied - (B7.03 00 00 .05)-SWL1-B07-D03 | 2d | 2028-01-31 | 2028-02-01 | RHD4CSWL1B07D031169, RHD4ENSWL1APPSTC1000 |  | -185d |
|  | 69 | **RHD4-02-002-SWL1-B07-FLOW METER CHAMABER-Retaining Walls & Slab** |  | 2028-02-02 | 2028-02-17 |  |  |  |
| RHD4CSWL1B07D031171 |  | Steel Fixing - (B7.03 00 00 .07)-SWL1-B07-D03 | 3d | 2028-02-02 | 2028-02-05 | RHD4CSWL1B07D031170, RHD4ENSWL1APPSTC1000 |  | -185d |
| RHD4CSWL1B07D031172 |  | Formwork - (B7.03 00 00 .07)-SWL1-B07-D03 | 3d | 2028-02-06 | 2028-02-08 | RHD4CSWL1B07D031171 |  | -185d |
| RHD4CSWL1B07D031173 |  | RC Casting - (B7.03 00 00 .07)-SWL1-B07-D03 | 4d | 2028-02-09 | 2028-02-13 | RHD4CSWL1B07D031172 |  | -185d |
| RHD4CSWL1B07D031174 |  | Water protection Board membrance Fluid-Applied - (B7.07 14 00.01)-SWL1-B07-D03 | 4d | 2028-02-14 | 2028-02-17 | RHD4CSWL1B07D031173, RHD4PRSHLDOSLFS1300, RHD4PRSHLSTAGLFS1300 |  | -185d |
|  | 70 | **RHD4-02-002-SWL1-B07-FLOW METER CHAMABER-Magnetic type flowmeter Installation** |  | 2028-02-19 | 2028-03-11 |  |  |  |
| RHD4CSWL1B07D151175 |  | Flow meter installation 250mm - (B7.22 05 19.02)-SWL1-B07-D15 | 3d | 2028-02-19 | 2028-02-21 | RHD4CSWL1B07D031174, RHD4PRLOLSTAGLFS1200, RHD4ENSWL1APPMEC1200, RHD4GNPPSD1100, RHD4ENSDSWL1SUB3000, RHD4ENSDZ6SUBRD220, RHD4ENSDSTL1SUB3000 |  | -185d |
| RHD4CSWL1B07D151176 |  | UPVC Conduits 1 inch UPVC - (B7.22 05 19.02)-SWL1-B07-D15 | 3d | 2028-02-23 | 2028-02-26 | RHD4CSWL1B07D151175 |  | -185d |
| RHD4CSWL1B07D151177 |  | Electrical power and cable connection - (B7.22 05 19.02)-SWL1-B07-D15 | 5d | 2028-03-01 | 2028-03-06 | RHD4CSWL1B07D151176 |  | -185d |
| RHD4CSWL1B07D151178 |  | Flow meter Panel Integration and connection - (B7.22 05 19.02)-SWL1-B07-D15 | 4d | 2028-03-07 | 2028-03-11 | RHD4CSWL1B07D151177 |  | -185d |
|  | 71 | **RHD4-02-002-SWL1-B07-FLOW METER CHAMABER-Non-Return Valve** |  | 2028-03-27 | 2028-04-01 |  |  |  |
| RHD4CSWL1B07D151180 |  | Check Valve with diameter 250mm. 250mm - (B7.22 05 24.02)-SWL1-B07-D15 | 5d | 2028-03-27 | 2028-04-01 | RHD4CSWL1B07D161155, RHD4PRSHLDOSLFS1800, RHD4PRSHLSTAGLFS1800, RHD4CSWL1B07D151178, RHD4CZ3C011LV4300, RHD4ENSWL1APPMEC1200, RHD4GNPPSD1100, RHD4ENSDSWL1SUB3000, RHD4ENSDZ6SUBRD220, RHD4ENSDSTL1SUB3000, RHD4CZ6CH6ST1130 |  | -198d |
|  | 72 | **RHD4-02-002-SWL1-B07-GENERATOR FOUNDATION** |  | 2027-12-26 | 2028-01-24 |  |  |  |

| ID | WBS | Task | Duration | Start | Finish | Predecessors | Total float |
| --- | --- | --- | --- | --- | --- | --- | --- |
|  | 73 | **RHD4-02-002-SWL1-B07-GENERATOR FOUNDATION-Concrete works** |  | 2027-12-26 | 2028-01-17 |  |  |
| RHD4CSWL1B07D031183 |  | Lean Concrete 100mm - (B7.03 00 00 .01)-SWL1-B07-D03 | 2d | 2027-12-26 | 2027-12-27 | RHD4CSWL1B07D101158 SS | -197d |
| RHD4CSWL1B07D031184 |  | Water proofing membrance Bituminous Sheet - (B7.07 13 13.01)-SWL1-B07-D03 | 3d | 2027-12-28 | 2027-12-30 | RHD4CSWL1B07D031183, RHD4PRSHLDOSLFS1200, RHD4PRSHLSTAGLFS1200 | -191d |
| RHD4CSWL1B07D031185 |  | Screed 50mm - (B7.03 00 00 .04)-SWL1-B07-D03 | 2d | 2028-01-01 | 2028-01-02 | RHD4CSWL1B07D031184 | -191d |
| RHD4CSWL1B07D031186 |  | Steel Fixing - (B7.03 00 00 .05)-SWL1-B07-D03 | 3d | 2028-01-03 | 2028-01-05 | RHD4CSWL1B07D031185, RHD4ENSWL1APPSTC1000 | -191d |
| RHD4CSWL1B07D031187 |  | Formwork - (B7.03 00 00 .05)-SWL1-B07-D03 | 4d | 2028-01-06 | 2028-01-10 | RHD4CSWL1B07D031186, RHD4ENSWL1APPSTC1000 | -191d |
| RHD4CSWL1B07D031188 |  | RC Casting - (B7.03 00 00 .05)-SWL1-B07-D03 | 2d | 2028-01-11 | 2028-01-12 | RHD4CSWL1B07D031187 | -191d |
| RHD4CSWL1B07D031189 |  | Water protection Board membrance Fluid-Applied - (B7.07 14 00.01)-SWL1-B07-D03 | 4d | 2028-01-13 | 2028-01-17 | RHD4CSWL1B07D031188, RHD4PRSHLDOSLFS1300, RHD4PRSHLSTAGLFS1300 | -191d |
|  | 74 | **RHD4-02-002-SWL1-B07-GENERATOR FOUNDATION-Standby Diesel Generator** |  | 2028-01-18 | 2028-01-24 |  |  |
| RHD4CSWL1B07D151190 |  | Standby Diesel Generator Set 150 KVA - Installation 150kva - (B7.26 32 12.01)-SWL1-B07-D15 | 3d | 2028-01-18 | 2028-01-20 | RHD4CSWL1B07D031189, RHD4PRLOLSTAGLFS1600 | -191d |
| RHD4CSWL1B07D151191 |  | Automatic Transfer Switch ATS panel 300A - Installation 300A - (B7.26 32 12.02)-SWL1-B07-D15 | 3d | 2028-01-22 | 2028-01-24 | RHD4CSWL1B07D151190 | -191d |
|  | 75 | **RHD4-02-002-SWL1-B07-SURGE VESSEL** |  | 2028-01-25 | 2028-02-17 |  |  |
|  | 76 | **RHD4-02-002-SWL1-B07-SURGE VESSEL -Concrete works** |  | 2028-01-25 | 2028-02-17 |  |  |
| RHD4CSWL1B07D031194 |  | Lean Concrete 100mm - (B7.03 00 00 .01)-SWL1-B07-D03 | 2d | 2028-01-25 | 2028-01-26 | RHD4CSWL1B07D151191 | -191d |
| RHD4CSWL1B07D031195 |  | Water proofing membrance Bituminous Sheet - (B7.07 13 13.01)-SWL1-B07-D03 | 3d | 2028-01-27 | 2028-01-30 | RHD4CSWL1B07D031194, RHD4PRSHLDOSLFS1200, RHD4PRSHLSTAGLFS1200 | -191d |
| RHD4CSWL1B07D031196 |  | Screed 50mm - (B7.03 00 00 .04)-SWL1-B07-D03 | 3d | 2028-01-31 | 2028-02-02 | RHD4CSWL1B07D031195 | -191d |
| RHD4CSWL1B07D031197 |  | Steel Fixing - (B7.03 00 00 .05)-SWL1-B07-D03 | 4d | 2028-02-03 | 2028-02-07 | RHD4CSWL1B07D031196 | -191d |
| RHD4CSWL1B07D031198 |  | Formwork - (B7.03 00 00 .05)-SWL1-B07-D03 | 4d | 2028-02-08 | 2028-02-12 | RHD4CSWL1B07D031197 | -191d |
| RHD4CSWL1B07D031199 |  | RC Casting - (B7.03 00 00 .05)-SWL1-B07-D03 | 2d | 2028-02-13 | 2028-02-14 | RHD4CSWL1B07D031198 | -191d |
| RHD4CSWL1B07D031200 |  | Water protection Board membrance Fluid-Applied - (B7.07 14 00.01)-SWL1-B07-D03 | 3d | 2028-02-15 | 2028-02-17 | RHD4CSWL1B07D031199, RHD4PRSHLDOSLFS1300, RHD4PRSHLSTAGLFS1300 | -191d |
|  | 77 | **RHD4-02-002-SWL1-B07-SURGE VESSEL -Surge Tank** |  |  |  |  |  |
|  | 78 | **RHD4-02-002-SWL1-B07-ODOR UNIT** |  | 2027-12-26 | 2028-04-09 |  |  |
|  | 79 | **RHD4-02-002-SWL1-B07-ODOR UNIT-Concrete works** |  | 2027-12-26 | 2028-03-12 |  |  |
| RHD4CSWL1B07D031204 |  | Lean Concrete 100mm - (B7.03 00 00 .01)-SWL1-B07-D03 | 2d | 2027-12-26 | 2027-12-27 | RHD4CSWL1B07D031183 SS | -197d |
| RHD4CSWL1B07D031205 |  | Water proofing membrance Bituminous Sheet - (B7.07 13 13.01)-SWL1-B07-D03 | 3d | 2027-12-28 | 2027-12-30 | RHD4CSWL1B07D031204, RHD4PRSHLDOSLFS1200, RHD4PRSHLSTAGLFS1200 | -197d |
| RHD4CSWL1B07D031206 |  | Screed 50mm - (B7.03 00 00 .04)-SWL1-B07-D03 | 3d | 2028-02-19 | 2028-02-21 | RHD4CSWL1B07D031205, RHD4CSWL1B07D031200 | -191d |
| RHD4CSWL1B07D031207 |  | Steel Fixing - (B7.03 00 00 .05)-SWL1-B07-D03 | 4d | 2028-02-23 | 2028-03-01 | RHD4CSWL1B07D031206 | -191d |
| RHD4CSWL1B07D031208 |  | Formwork - (B7.03 00 00 .05)-SWL1-B07-D03 | 4d | 2028-03-02 | 2028-03-06 | RHD4CSWL1B07D031207 | -191d |
| RHD4CSWL1B07D031209 |  | RC Casting - (B7.03 00 00 .05)-SWL1-B07-D03 | 2d | 2028-03-07 | 2028-03-08 | RHD4CSWL1B07D031208 | -191d |
| RHD4CSWL1B07D031210 |  | Water protection Board membrance Fluid-Applied - (B7.07 14 00.01)-SWL1-B07-D03 | 3d | 2028-03-09 | 2028-03-12 | RHD4CSWL1B07D031209, RHD4PRSHLDOSLFS1300, RHD4PRSHLSTAGLFS1300 | -191d |
|  | 80 | **RHD4-02-002-SWL1-B07-ODOR UNIT-Odor Control Unit** |  | 2028-03-09 | 2028-04-09 |  |  |
| RHD4CSWL1B07D151211 |  | Carbon Filter Installation 1110 L/s - (B7.44 30 00.01)-SWL1-B07-D15 | 4d | 2028-03-09 | 2028-03-13 | RHD4CSWL1B07D031210 SS, RHD4PRLOLSTAGLFS1400, RHD4ENSWL1APPMEC1200, RHD4GNPPSD1100, RHD4ENSDSWL1SUB3000, RHD4ENSDZ6SUBRD220, RHD4ENSDSTL1SUB3000 | -191d |
| RHD4CSWL1B07D151212 |  | Exhaust Fans Installation - (B7.44 30 00.01)-SWL1-B07-D15 | 4d | 2028-03-14 | 2028-03-18 | RHD4CSWL1B07D151211, RHD4PRLOLSTAGLFS1400, RHD4ENSWL1APPMEC1200, RHD4GNPPSD1100, RHD4ENSDSWL1SUB3000, RHD4ENSDZ6SUBRD220, RHD4ENSDSTL1SUB3000 | -191d |
| RHD4CSWL1B07D151213 |  | Chimeny Stack Installation - (B7.44 30 00.01)-SWL1-B07-D15 | 5d | 2028-03-27 | 2028-04-01 | RHD4CSWL1B07D151212, RHD4CSWL1B07D151180 SS, RHD4PRLOLSTAGLFS1400, RHD4CSWL1B07D031210, RHD4ENSWL1APPMEC1200, RHD4GNPPSD1100, RHD4ENSDSWL1SUB3000, RHD4ENSDZ6SUBRD220, RHD4ENSDSTL1SUB3000 | -198d |
| RHD4CSWL1B07D151214 |  | Piping Connection 1110 L/s - (B7.44 30 00.01)-SWL1-B07-D15 | 7d | 2028-04-02 | 2028-04-09 | RHD4CSWL1B07D151213, RHD4PRLOLSTAGLFS1400, RHD4CZ6A015CCTV6100, RHD4ENSWL1APPMEC1200, RHD4GNPPSD1100, RHD4ENSDSWL1SUB3000, RHD4ENSDZ6SUBRD220, RHD4ENSDSTL1SUB3000 | -198d |
|  | 81 | **RHD4-02-002-SWL1-B07-CCTV INSTALLATION** |  |  |  |  |  |
|  | 315 | **Open Channels - CH** |  | 2027-04-29 | 2027-12-23 |  |  |
|  | 316 | **RHD4-02-002-Z1-Open Channels - CH-1** |  | 2027-04-29 | 2027-06-29 |  |  |
|  | 317 | **RHD4-02-002-Z1-Open Channel - ST** |  | 2027-04-29 | 2027-06-29 |  |  |
|  | 318 | **RHD4-02-002-CH1-(ST)-Open Drain Channel** |  | 2027-04-29 | 2027-06-29 |  |  |
| RHD4CZ1CH1ST1100 |  | Channels excavation for Open Channel - (B6.31 23 00.01)-Z1-CH1-ST | 21d | 2027-04-29 | 2027-05-29 | RHD4CZ4A013SL5200 | -121.02d |
| RHD4CZ1CH1ST1300 |  | Loose riprap on the channels bed for Open Channel - (B6.31 37 00.01)-Z1-CH1-ST | 12d | 2027-05-29 | 2027-06-12 | RHD4CZ1CH1ST1100 | -120.02d |
| RHD4CZ1CH1ST1200 |  | Grouted riprap on side slopes for Open Channel - (B6.31 37 00.02)-Z1-CH1-ST | 15d | 2027-06-12 | 2027-06-29 | RHD4PRSHLDOSST1400, RHD4PRSHLSTAGST1400, RHD4CZ1CH1ST1300 | -120.02d |
|  | 319 | **RHD4-02-002-Z2-Open Channels - CH-4** |  | 2027-05-29 | 2027-06-14 |  |  |
|  | 320 | **RHD4-02-002-Z2-Open Channel - ST** |  | 2027-05-29 | 2027-06-14 |  |  |
|  | 321 | **RHD4-02-002-CH4-(ST)-Open Drain Channel Part 1** |  | 2027-05-29 | 2027-06-14 |  |  |
| RHD4CZ2CH4ST1100 |  | Channels excavation for Open Channel - (B6.31 23 00.01)-Z2-CH4-ST | 14d | 2027-05-29 | 2027-06-14 | RHD4CZ1CH1ST1100 | -121.02d |
|  | 322 | **RHD4-02-002-CH4-(ST)-Open Drain Channel Part 2** |  |  |  |  |  |
|  | 1 | **RHD4-02-002-Z3-Open Channels - CH-3** |  | 2027-06-14 | 2027-06-27 |  |  |
|  | 317 | **RHD4-02-002-Z3-Open Channel - ST** |  | 2027-06-14 | 2027-06-27 |  |  |
|  | 318 | **RHD4-02-002-CH3-(ST)-Open Drain Channel** |  | 2027-06-14 | 2027-06-27 |  |  |
| RHD4CZ3CH3ST1100 |  | Channels excavation for Open Channel - (B6.31 23 00.01)-Z3-CH3-ST | 11d | 2027-06-14 | 2027-06-27 | RHD4CZ2CH4ST1100 | -121.02d |
|  | 3 | **RHD4-02-002-Z4-Open Channels - CH-5** |  | 2027-06-27 | 2027-10-28 |  |  |
|  | 320 | **RHD4-02-002-Z4-Open Channel - ST** |  | 2027-06-27 | 2027-10-28 |  |  |
|  | 321 | **RHD4-02-002-CH5-(ST)-Open Drain Channel Part 1** |  | 2027-06-27 | 2027-09-08 |  |  |
| RHD4CZ4CH5ST1100 |  | Channels excavation for Open Channel - (B6.31 23 00.01)-Z4-CH5-ST | 21d | 2027-06-27 | 2027-07-21 | RHD4CZ3CH3ST1100 | -121.02d |
| RHD4CZ4CH5ST1200 |  | Grouted riprap on side slopes for Open Channel - (B6.31 37 00.02)-Z4-CH5-ST | 21d | 2027-07-21 | 2027-08-15 | RHD4CZ4CH5ST1100 | -78.02d |
| RHD4CZ4CH5ST1300 |  | Loose riprap on the channels bed for Open Channel - (B6.31 37 00.01)-Z4-CH5-ST | 21d | 2027-08-15 | 2027-09-08 | RHD4CZ4CH5ST1200, RHD4CZ1CH1ST1200 FF | -78.02d |
|  | 322 | **RHD4-02-002-CH5-(ST)-Open Drain Channel Part 2** |  | 2027-07-21 | 2027-10-04 |  |  |
| RHD4CZ4CH5ST1110 |  | Channels excavation for Open Channel - (B6.31 23 00.01)-Z4-CH5-ST | 21d | 2027-07-21 | 2027-08-15 | RHD4CZ4CH5ST1100 | -121.02d |
| RHD4CZ4CH5ST1210 |  | Grouted riprap on side slopes for Open Channel - (B6.31 37 00.02)-Z4-CH5-ST | 21d | 2027-08-15 | 2027-09-08 | RHD4CZ4CH5ST1110 | -99.02d |
| RHD4CZ4CH5ST1310 |  | Loose riprap on the channels bed for Open Channel - (B6.31 37 00.01)-Z4-CH5-ST | 21d | 2027-09-08 | 2027-10-04 | RHD4CZ4CH5ST1210 | -99.02d |
|  | 1 | **RHD4-02-002-CH5-(ST)-Open Drain Channel Part 3** |  | 2027-08-15 | 2027-10-28 |  |  |
| RHD4CZ4CH5ST1120 |  | Channels excavation for Open Channel - (B6.31 23 00.01)-Z4-CH5-ST | 21d | 2027-08-15 | 2027-09-08 | RHD4CZ4CH5ST1110 | -121.02d |
| RHD4CZ4CH5ST1220 |  | Grouted riprap on side slopes for Open Channel - (B6.31 37 00.02)-Z4-CH5-ST | 21d | 2027-09-08 | 2027-10-04 | RHD4CZ4CH5ST1120 | -120.02d |
| RHD4CZ4CH5ST1320 |  | Loose riprap on the channels bed for Open Channel - (B6.31 37 00.01)-Z4-CH5-ST | 21d | 2027-10-04 | 2027-10-28 | RHD4CZ4CH5ST1220, RHD4CZ4CH5ST1300 FF, RHD4CZ4CH5ST1310 FF | -120.02d |
|  | 2 | **RHD4-02-002-Z5-Open Channels - CH-2** |  | 2027-09-08 | 2027-09-20 |  |  |
|  | 317 | **RHD4-02-002-Z5-Open Channel - ST** |  | 2027-09-08 | 2027-09-20 |  |  |
|  | 318 | **RHD4-02-002-CH2-(ST)-Open Drain Channel** |  | 2027-09-08 | 2027-09-20 |  |  |
| RHD4CZ5CH2ST1100 |  | Channels excavation for Open Channel - (B6.31 23 00.01)-Z5-CH2-ST | 10d | 2027-09-08 | 2027-09-20 | RHD4CZ4CH5ST1120 | -121.02d |

| ID | WBS | Task | Duration | Start | Finish | Predecessors | Total float |
| --- | --- | --- | --- | --- | --- | --- | --- |
|  | 4 | **RHD4-02-002-Z6-Open Channels - CH-6** |  | 2027-09-20 | 2027-12-23 |  |  |
|  | 320 | **RHD4-02-002-Z6-Open Channel - ST** |  | 2027-09-20 | 2027-12-23 |  |  |
|  | 321 | **RHD4-02-002-CH6-(ST)-Open Drain Channel Part 1** |  | 2027-09-20 | 2027-10-14 |  |  |
| RHD4CZ6CH6ST1100 |  | Channels excavation for Open Channel - (B6.31 23 00.01)-Z6-CH6-ST | 20d | 2027-09-20 | 2027-10-14 | RHD4CZ5CH2ST1100 | -121.02d |
|  | 322 | **RHD4-02-002-CH6-(ST)-Open Drain Channel Part 2** |  | 2027-10-14 | 2027-11-07 |  |  |
| RHD4CZ6CH6ST1110 |  | Channels excavation for Open Channel - (B6.31 23 00.01)-Z6-CH6-ST | 20d | 2027-10-14 | 2027-11-07 | RHD4CZ6CH6ST1100 | -121.02d |
|  | 1 | **RHD4-02-002-CH6-(ST)-Open Drain Channel Part 3** |  | 2027-11-07 | 2027-11-30 |  |  |
| RHD4CZ6CH6ST1120 |  | Channels excavation for Open Channel - (B6.31 23 00.01)-Z6-CH6-ST | 20d | 2027-11-07 | 2027-11-30 | RHD4CZ6CH6ST1110 | -121.02d |
|  | 2 | **RHD4-02-002-CH6-(ST)-Open Drain Channel Part 4** |  | 2027-11-30 | 2027-12-23 |  |  |
| RHD4CZ6CH6ST1130 |  | Channels excavation for Open Channel - (B6.31 23 00.01)-Z6-CH6-ST | 20d | 2027-11-30 | 2027-12-23 | RHD4CZ6CH6ST1120 | -121.02d |
|  | 2 | **Provisional Sum** |  | 2029-01-07 | 2029-01-17 |  |  |
| A1000 |  | De-scoping | 11d | 2029-01-07 | 2029-01-17 | RHD4GNHODMOB1300 SS, RHD4HOASSTL1SUB1000, RHD4HOASSTL1SUB1100, RHD4HOASSTL1SUB1200, RHD4HOASSTL1SUB1300 | -232d |
|  | 9216 | **RHD4-02-002-Final Testing and Commissioning - FT** |  | 2027-06-08 | 2028-10-26 |  |  |
|  | 9217 | **RHD4-02-002-Final Testing and Commissioning - FT-Z1** |  | 2027-10-03 | 2028-08-13 |  |  |
| RHD4GNLVZ1FT1500 |  | Final Testing and Commissioning for Low Voltage Network - FT-Z1-LV | 30d | 2027-10-03 | 2027-11-06 | RHD4CZ1L101LV3400, RHD4CZ1C081LV3400, RHD4GNLVZ2FT1500 SS | -190d |
| RHD4GNSLZ1FT1600 |  | Final Testing and Commissioning for Street Lighting Network - FT-Z1-SL | 30d | 2027-10-31 | 2027-12-04 | RHD4CZ1L101SL3400, RHD4CZ1C081SL3400, RHD4CZ1L101SL1500, RHD4CZ1C081SL1500, RHD4CZ1C081SL4300 | -194d |
| RHD4GNCCTVZ1FT2000 |  | Final Testing and Commissioning for Security "CCTV" Network - FT-Z1-CCTV | 30d | 2028-01-08 | 2028-02-10 | RHD4CZ1L101CCTV4200, RHD4CZ1C081CCTV4200, RHD4CZ1C081CCTV1500, RHD4CZ1L101CCTV1500, RHD4CZ1L101CCTV4100, RHD4CZ1C081CCTV4100 | -196d |
| RHD4GNTCZ1FT1800 |  | Final Testing and Commissioning for Telecommunications Network - FT-Z1-TC | 30d | 2028-04-20 | 2028-05-28 | RHD4CZ1C081TC2400, RHD4CZ1L101TC2400, RHD4GNTCZ5FT1800, RHD4HOASZ5APPSL170 | -166d |
| RHD4GNICTZ1FT1900 |  | Final Testing and Commissioning for ICT Network - FT-Z1-ICT | 30d | 2028-05-29 | 2028-07-02 | RHD4CZ1C081ICT2400, RHD4CZ1L101ICT2400, RHD4GNICTZ4FT1900 SS | -139d |
| RHD4GNSTZ1FT1000 |  | Final Testing and Commissioning for Storm Network - FT-Z1-ST | 12d | 2028-05-29 | 2028-06-11 | RHD4CZ1L101ST3500, RHD4CZ1L101ST3501, RHD4CZ1L101ST7500, RHD4CZ1C081ST3501, RHD4CZ1C081ST8500, RHD4CZ1C081ST3500, RHD4CZ1C081ST7500, RHD4GNSTZ2FT1000 SS | -166d |
| RHD4GNIRRZ1FT1300 |  | Final Testing and Commissioning for Irrigation Network - FT-Z1-IRR | 30d | 2028-06-12 | 2028-07-16 | RHD4CZ1C081IRR1404, RHD4CZ1C081IRR3200, RHD4CZ1L101IRR1404, RHD4CZ1L101IRR3200, RHD4GNIRRZ8FT1300 SS | -158d |
| RHD4GNMVZ1FT1400 |  | Final Testing and Commissioning for Medium Voltage Network - FT-Z1-MV | 30d | 2028-06-12 | 2028-07-16 | RHD4CZ1C081MV3300, RHD4CZ1C081MV3400, RHD4CZ1C081MV3401, RHD4CZ1L101MV3300, RHD4GNMVZ4FT1400 SS | -158d |
| RHD4GNPTZ1FT1200 |  | Final Testing and Commissioning for Potable Water Network - FT-Z1-PT | 30d | 2028-06-12 | 2028-07-16 | RHD4CZ1C081PT1402, RHD4CZ1C081PT4500, RHD4CZ1C081PT3203, RHD4CZ1C081PT3200, RHD4CZ1C081PT4300, RHD4CZ1C081PT4200, RHD4CZ1L101PT1400, RHD4CZ1L101PT1401, RHD4GNPTZ6FT1200 SS | -158d |
| RHD4GNSWZ1FT1100 |  | Final Testing and Commissioning for Sewage Network - FT-Z1-SW | 30d | 2028-07-10 | 2028-08-13 | RHD4CZ1C081SW2400, RHD4CZ1C081SW3400, RHD4CZ1L101SW3400, RHD4CZ1L101SW2400, RHD4CZ1C081SW3500, RHD4GNSWZ2FT1100 SS | -154d |
|  | 9218 | **RHD4-02-002-Final Testing and Commissioning - FT-Z2** |  | 2027-06-08 | 2028-07-23 |  |  |
| RHD4GNLVZ2FT1500 |  | Final Testing and Commissioning for Low Voltage Network - FT-Z2-LV | 30d | 2027-06-08 | 2027-07-12 | RHD4CZ2L011LV3400 | -91d |
| RHD4GNSLZ2FT1600 |  | Final Testing and Commissioning for Street Lighting Network - FT-Z2-SL | 30d | 2027-11-07 | 2027-12-11 | RHD4CZ2C082SL6100, RHD4CZ2L102SL6100, RHD4CZ2C082SL1500, RHD4CZ2L102SL1500, RHD4CZ2L011SL1500, RHD4CZ2C082SL3400, RHD4CZ2L102SL3400, RHD4CZ2L011SL3400, RHD4GNLVZ1FT1500 | -190d |
| RHD4GNCCTVZ2FT2000 |  | Final Testing and Commissioning for Security "CCTV" Network - FT-Z2-CCTV | 30d | 2028-02-16 | 2028-03-27 | RHD4CZ2C082CCTV1500, RHD4CZ2L102CCTV1500, RHD4CZ2C082CCTV4200, RHD4CZ2L102CCTV4200, RHD4CZ2C082CCTV4100, RHD4CZ2L102CCTV4100, RHD4CZ3C011CCTV2100, RHD4GNCCTVZ4FT2000 SS | -134.02d |
| RHD4GNICTZ2FT1900 |  | Final Testing and Commissioning for ICT Network - FT-Z2-ICT | 30d | 2028-05-29 | 2028-07-02 | RHD4CZ2C082ICT2400, RHD4CZ2L102ICT2400, RHD4CZ2L011ICT2400, RHD4GNICTZ4FT1900 SS | -163d |
| RHD4GNSTZ2FT1000 |  | Final Testing and Commissioning for Storm Network - FT-Z2-ST | 12d | 2028-05-29 | 2028-06-11 | RHD4CZ2L102ST1406, RHD4CZ2C082ST1400, RHD4CZ2L102ST1400, RHD4CZ2L011ST1400, RHD4CZ2C082ST1401, RHD4CZ2C082ST1402, RHD4CZ2L102ST1402, RHD4CZ2C082ST1403, RHD4CZ2L102ST1403, RHD4CZ2L102ST1404, RHD4CZ2L102ST1405, RHD4CZ2C082ST2400, RHD4CZ2L102ST2400, RHD4CZ2L011ST2400, RHD4CZ2C082ST8400, RHD4CZ2L102ST8400, RHD4CZ2C082ST3400, RHD4CZ2L102ST3400, RHD4CZ2L011ST3400, RHD4CZ2C082ST3401, RHD4CZ2L102ST3401, RHD4CZ2L102ST3402, RHD4CZ2C082ST7400, RHD4CZ2L102ST7400, RHD4CZ2L011ST7400, RHD4CZ2C082ST8500, RHD4CZ2L102ST8500, RHD4CZ2C082ST7500, RHD4CZ2L102ST7500, RHD4CZ2L011ST7500, RHD4CZ2C082ST3500, RHD4CZ2L102ST3500, RHD4CZ2L011ST3500, RHD4CZ2C082ST3501, RHD4CZ2L102ST3501, RHD4CZ2L102ST3502, RHD4CZ2C082ST4600, RHD4CZ2L102ST4600, RHD4GNTCZ1FT1800 | -166d |
| RHD4GNTCZ2FT1800 |  | Final Testing and Commissioning for Telecommunications Network - FT-Z2-TC | 30d | 2028-05-29 | 2028-07-02 | RHD4CZ2C082TC2400, RHD4CZ2L102TC2400, RHD4CZ2L011TC2400, RHD4GNTCZ8FT1800, RHD4GNTCZ1FT1800 | -140d |
| RHD4GNIRRZ2FT1300 |  | Final Testing and Commissioning for Irrigation Network - FT-Z2-IRR | 30d | 2028-06-12 | 2028-07-16 | RHD4CZ2C082IRR1404, RHD4CZ2L102IRR1404, RHD4CZ2C082IRR3200, RHD4CZ2L102IRR3200, RHD4GNIRRZ8FT1300 SS | -158d |
| RHD4GNMVZ2FT1400 |  | Final Testing and Commissioning for Medium Voltage Network - FT-Z2-MV | 30d | 2028-06-12 | 2028-07-16 | RHD4CZ2L102MV4200, RHD4CZ2L102MV3401, RHD4CZ2L102MV3400, RHD4CZ2L102MV3300, RHD4CZ2L011MV3300, RHD4GNMVZ4FT1400 SS | -158d |
| RHD4GNPTZ2FT1200 |  | Final Testing and Commissioning for Potable Water Network - FT-Z2-PT | 30d | 2028-06-12 | 2028-07-16 | RHD4CZ2C082PT4400, RHD4CZ2L102PT4400, RHD4CZ2L011PT4400, RHD4CZ2L102PT1400, RHD4CZ2L102PT1401, RHD4CZ2L011PT1401, RHD4CZ2C082PT1402, RHD4CZ2C082PT4500, RHD4CZ2L102PT4500, RHD4CZ2L011PT4500, RHD4CZ2C082PT3203, RHD4CZ2L102PT3203, RHD4CZ2L011PT3203, RHD4CZ2C082PT3200, RHD4CZ2L102PT3200, RHD4CZ2L011PT3200, RHD4CZ2C082PT3202, RHD4CZ2L102PT3202, RHD4CZ2C082PT4300, RHD4CZ2L102PT4300, RHD4CZ2L011PT4300, RHD4CZ2C082PT4200, RHD4CZ2L102PT4200, RHD4CZ2L011PT4200, RHD4GNPTZ6FT1200 SS | -158d |
| RHD4GNSWZ2FT1100 |  | Final Testing and Commissioning for Sewage Network - FT-Z2-SW | 12d | 2028-07-10 | 2028-07-23 | RHD4CZ2L102SW3500, RHD4CZ2L102SW2400, RHD4CZ2L102SW3400, RHD4GNSWZ3FT1100 SS | -154d |
|  | 9219 | **RHD4-02-002-Final Testing and Commissioning - FT-Z3** |  | 2027-12-11 | 2028-10-26 |  |  |
| RHD4GNLVZ3FT1500 |  | Final Testing and Commissioning for Low Voltage Network - FT-Z3-LV | 15d | 2027-12-11 | 2027-12-27 | RHD4CZ3C011LV3400, RHD4CZ3C083LV3400, RHD4CZ3L122LV3400, RHD4CZ3C011LV4300, RHD4CZ3L122LV4300, RHD4GNLVZ2FT1500 SS, RHD4CZ3L122LV5200 | -185d |
| RHD4GNSTZ3FT1000 |  | Final Testing and Commissioning for Storm Network - FT-Z3-ST | 12d | 2028-05-29 | 2028-06-11 | RHD4CZ3L122ST8500, RHD4CZ3C083ST7500, RHD4CZ3L122ST7500, RHD4CZ3C083ST3500, RHD4CZ3L122ST3500, RHD4CZ3L122ST3501, RHD4CZ3L122ST3502, RHD4CZ3C083ST1400, RHD4CZ3L122ST1400, RHD4CZ3L122ST1404, RHD4CZ3C083ST2400, RHD4CZ3L122ST2400, RHD4CZ3L122ST8400, RHD4CZ3C083ST3400, RHD4CZ3L122ST3400, RHD4CZ3L122ST3401, RHD4CZ3L122ST3402, RHD4CZ3C083ST7400, RHD4CZ3L122ST7400, RHD4GNSTZ2FT1000 SS | -146d |
| RHD4GNIRRZ3FT1300 |  | Final Testing and Commissioning for Irrigation Network - FT-Z3-IRR | 30d | 2028-06-12 | 2028-07-16 | RHD4CZ3L122IRR1400, RHD4CZ3C083IRR1404, RHD4CZ3L122IRR1404, RHD4CZ3C011IRR3203, RHD4CZ3L122IRR3200, RHD4CZ3L122IRR3202, RHD4GNIRRZ8FT1300 SS | -158d |
| RHD4GNMVZ3FT1400 |  | Final Testing and Commissioning for Medium Voltage Network - FT-Z3-MV | 30d | 2028-06-12 | 2028-07-16 | RHD4CZ3C011MV4200, RHD4CZ3C011MV3401, RHD4CZ3L122MV3401, RHD4CZ3C011MV3400, RHD4CZ3L122MV3400, RHD4CZ3C011MV3301, RHD4CZ3L122MV3301, RHD4CZ3C011MV3300, RHD4CZ3L122MV3300, RHD4CZ3C011MV5400, RHD4CZ3L122MV5400, RHD4GNMVZ4FT1400 SS | -158d |
| RHD4GNPTZ3FT1200 |  | Final Testing and Commissioning for Potable Water Network - FT-Z3-PT | 30d | 2028-06-12 | 2028-07-16 | RHD4CZ3C011PT3201, RHD4CZ3C011PT3202, RHD4CZ3C011PT3203, RHD4CZ3C011PT4300, RHD4CZ3C011PT4500, RHD4CZ3C011PT1403, RHD4CZ3C083PT1403, RHD4CZ3L122PT1403, RHD4CZ3C011PT1404, RHD4CZ3C011PT4500 FF, RHD4CZ3C083PT4500, RHD4CZ3L122PT4500, RHD4CZ3C011PT3203 FF, RHD4CZ3C083PT3203, RHD4CZ3L122PT3203, RHD4CZ3C011PT3201 FF, RHD4CZ3C011PT3202 FF, RHD4CZ3L122PT3202, RHD4CZ3C011PT4300 FF, RHD4CZ3C083PT4300, RHD4CZ3L122PT4300, RHD4GNPTZ6FT1200 SS | -158d |
| RHD4GNTCZ3FT1800 |  | Final Testing and Commissioning for Telecommunications Network - FT-Z3-TC | 30d | 2028-07-01 | 2028-08-03 | RHD4CZ3C011TC2400, RHD4CZ3C083TC2400, RHD4CZ3L122TC2400, RHD4GNTCZ9FT1800 | -174d |
| RHD4GNSLZ3FT1600 |  | Final Testing and Commissioning for Street Lighting Network - FT-Z3-SL | 30d | 2028-07-05 | 2028-08-08 | RHD4CZ3C011SL3400, RHD4CZ3C083SL3400, RHD4CZ3L122SL3400, RHD4CZ3C011SL1500, RHD4CZ3C083SL1500, RHD4CZ3L122SL1500, RHD4CZ3C011SL6100, RHD4CZ3C083SL6100, RHD4CZ3L122SL6100, RHD4CZ3C011SL4300, RHD4CZ3C083SL4300, RHD4GNICTZ2FT1900, RHD4GNICTZ7FT1900, RHD4GNICTZ8FT1900 | -165d |
| RHD4GNSWZ3FT1100 |  | Final Testing and Commissioning for Sewage Network - FT-Z3-SW | 12d | 2028-07-10 | 2028-07-23 | RHD4GNSWZ9FT1100 | -154d |
| RHD4GNCCTVZ3FT2000 |  | Final Testing and Commissioning for Security "CCTV" Network - FT-Z3-CCTV | 30d | 2028-08-17 | 2028-09-20 | RHD4CZ3C083CCTV4100, RHD4CZ3L122CCTV4100, RHD4CZ3C083CCTV1500, RHD4CZ3L122CCTV1500, RHD4CZ3C083CCTV4200, RHD4CZ3L122CCTV4200, RHD4CZ3C083CCTV6100, RHD4CZ3L122CCTV6100, RHD4CZ3C083CCTV1400, RHD4CZ3L122CCTV1400, RHD4GNCCTVZ4FT2000 SS | -197d |
| RHD4GNICTZ3FT1900 |  | Final Testing and Commissioning for ICT Network - FT-Z3-ICT | 30d | 2028-09-21 | 2028-10-26 | RHD4CZ3C011ICT2400, RHD4CZ3C083ICT2400, RHD4CZ3L122ICT2400, RHD4GNICTZ4FT1900 SS, RHD4GNCCTVZ3FT2000 | -197d |
|  | 9220 | **RHD4-02-002-Final Testing and Commissioning - FT-Z4** |  | 2027-10-16 | 2028-07-16 |  |  |
| RHD4GNLVZ4FT1500 |  | Final Testing and Commissioning for Low Voltage Network - FT-Z4-LV | 30d | 2027-10-16 | 2027-11-20 | RHD4CZ4C012LV3400, RHD4CZ4C031LV3400, RHD4CZ4L014LV3400, RHD4CZ4L09LV3400, RHD4CZ4L09LV4300, RHD4GNLVZ2FT1500 SS, RHD4CZ4A013LV5200 | -158.02d |
| RHD4GNSLZ4FT1600 |  | Final Testing and Commissioning for Street Lighting Network - FT-Z4-SL | 30d | 2027-11-08 | 2027-12-13 | RHD4CZ4A013SL3400, RHD4CZ4C012SL3400, RHD4CZ4C031SL3400, RHD4CZ4L014SL3400, RHD4CZ4L09SL3400, RHD4CZ4RA02SL3400, RHD4CZ4A013SL1500, RHD4CZ4C012SL1500, RHD4CZ4C031SL1500, RHD4CZ4L014SL1500, RHD4CZ4L09SL1500, RHD4CZ4RA02SL1500, RHD4CZ4A013SL6100, RHD4CZ4C031SL6100, RHD4CZ4L014SL6100, RHD4CZ4L09SL6100, RHD4CZ4L014SL5200, RHD4CZ4L09SL5200 | -170.02d |
| RHD4GNTCZ4FT1800 |  | Final Testing and Commissioning for Telecommunications Network - FT-Z4-TC | 30d | 2027-11-29 | 2028-01-03 | RHD4CZ4A013TC2400, RHD4CZ4C012TC2400, RHD4CZ4C031TC2400, RHD4CZ4L014TC2400, RHD4CZ4L09TC2400, RHD4GNLVZ4FT1500 | -107.02d |
| RHD4GNCCTVZ4FT2000 |  | Final Testing and Commissioning for Security "CCTV" Network - FT-Z4-CCTV | 30d | 2027-12-25 | 2028-01-29 | RHD4CZ4C031CCTV1500, RHD4CZ4L014CCTV1500, RHD4CZ4C031CCTV4200, RHD4CZ4C031CCTV4100, RHD4CZ4L014CCTV4100, RHD4CZ4RA02CCTV2100 | -129.02d |
| RHD4GNICTZ4FT1900 |  | Final Testing and Commissioning for ICT Network - FT-Z4-ICT | 30d | 2028-05-29 | 2028-07-02 | RHD4CZ4A013ICT2400, RHD4CZ4C012ICT2400, RHD4CZ4C031ICT2400, RHD4CZ4L014ICT2400, RHD4CZ4L09ICT2400, RHD4GNTCZ1FT1800 | -163d |
| RHD4GNSTZ4FT1000 |  | Final Testing and Commissioning for Storm Network - FT-Z4-ST | 12d | 2028-05-29 | 2028-06-11 | RHD4CZ4A013ST8500, RHD4CZ4L014ST8500, RHD4CZ4A013ST7500, RHD4CZ4C031ST7500, RHD4CZ4L014ST7500, RHD4CZ4L09ST7500, RHD4CZ4C031ST3500, RHD4CZ4L014ST3500, RHD4CZ4L09ST3500, RHD4CZ4A013ST3501, RHD4CZ4C031ST3501, RHD4CZ4L014ST3501, RHD4CZ4L09ST3501, RHD4CZ4A013ST3502, RHD4CZ4L014ST3502, RHD4CZ4A013ST1406, RHD4CZ4L014ST1406, RHD4CZ4A013ST1407, RHD4CZ4L014ST1407, RHD4CZ4A013ST1408, RHD4CZ4C031ST1400, RHD4CZ4L014ST1400, RHD4CZ4L014ST1401, RHD4CZ4L09ST1402, RHD4CZ4A013ST1403, RHD4CZ4L09ST1403, RHD4CZ4L09ST1404, RHD4CZ4A013ST1405, RHD4CZ4C031ST1405, RHD4CZ4L014ST1405, RHD4CZ4L09ST1405, RHD4CZ4A013ST2400, RHD4CZ4C031ST2400, RHD4CZ4L014ST2400, RHD4CZ4L09ST2400, RHD4CZ4A013ST8400, RHD4CZ4L014ST8400, RHD4CZ4C031ST3400, RHD4CZ4L014ST3400, RHD4CZ4L09ST3400, RHD4CZ4A013ST3401, RHD4CZ4C031ST3401, RHD4CZ4L014ST3401, RHD4CZ4L09ST3401, RHD4CZ4A013ST3402, RHD4CZ4L014ST3402, RHD4CZ4A013ST7400, RHD4CZ4C031ST7400, RHD4CZ4L014ST7400, RHD4CZ4L09ST7400, RHD4GNSTZ2FT1000 SS | -158d |
| RHD4GNSWZ4FT1100 |  | Final Testing and Commissioning for Sewage Network - FT-Z4-SW | 12d | 2028-05-29 | 2028-06-11 | RHD4CZ4L09SW3500, RHD4CZ4L014SW2400, RHD4CZ4L09SW2400, RHD4CZ4L09SW3400, RHD4GNSTZ1FT1000 SS | -166d |
| RHD4GNIRRZ4FT1300 |  | Final Testing and Commissioning for Irrigation Network - FT-Z4-IRR | 30d | 2028-06-12 | 2028-07-16 | RHD4CZ4L014IRR1400, RHD4CZ4L09IRR1400, RHD4CZ4A013IRR1403, RHD4CZ4L014IRR1403, RHD4CZ4L014IRR3200, RHD4CZ4L09IRR3200, RHD4CZ4L09IRR3202, RHD4GNIRRZ8FT1300 SS, RHD4CZ4CH5ST1320 | -130d |
| RHD4GNMVZ4FT1400 |  | Final Testing and Commissioning for Medium Voltage Network - FT-Z4-MV | 30d | 2028-06-12 | 2028-07-16 | RHD4CZ4L014MV4200, RHD4CZ4L09MV4200, RHD4CZ4L014MV3401, RHD4CZ4L09MV3401, RHD4CZ4L014MV3400, RHD4CZ4L09MV3400, RHD4CZ4L014MV3301, RHD4CZ4L09MV3301, RHD4CZ4A013MV3300, RHD4CZ4C012MV3300, RHD4CZ4C031MV3300, RHD4CZ4L014MV3300, RHD4CZ4L09MV3300, RHD4CZ4L014MV5400, RHD4CZ4L09MV5400, RHD4GNLVZ2FT1500 SS, RHD4GNSTZ4FT1000 | -158d |
| RHD4GNPTZ4FT1200 |  | Final Testing and Commissioning for Potable Water Network - FT-Z4-PT | 30d | 2028-06-12 | 2028-07-16 | RHD4CZ4A013PT4400, RHD4CZ4C031PT4400, RHD4CZ4L014PT4400, RHD4CZ4L09PT4400, RHD4CZ4L014PT1400, RHD4CZ4L09PT1400, RHD4CZ4L014PT1401, RHD4CZ4L09PT1401, RHD4CZ4A013PT1403, RHD4CZ4C031PT1403, RHD4CZ4L09PT1403, RHD4CZ4A013PT4500, RHD4CZ4C031PT4500, RHD4CZ4L014PT4500, RHD4CZ4L09PT4500, RHD4CZ4A013PT3203, RHD4CZ4L014PT3203, RHD4CZ4L09PT3203, RHD4CZ4A013PT3201, RHD4CZ4C031PT3201, RHD4CZ4L014PT3200, RHD4CZ4L09PT3200, RHD4CZ4A013PT3202, RHD4CZ4L014PT3202, RHD4CZ4A013PT4300, RHD4CZ4C031PT4300, RHD4CZ4L014PT4300, RHD4CZ4L09PT4300, RHD4GNPTZ6FT1200 SS | -126d |
|  | 9221 | **RHD4-02-002-Final Testing and Commissioning - FT-Z5** |  | 2027-09-14 | 2028-07-16 |  |  |
| RHD4GNLVZ5FT1500 |  | Final Testing and Commissioning for Low Voltage Network - FT-Z5-LV | 30d | 2027-09-14 | 2027-10-20 | RHD4CZ5C051LV3400, RHD4CZ5C061LV3400, RHD4CZ5L016LV3400, RHD4CZ5L07LV3400, RHD4CZ5L08LV3400, RHD4CZ5RA07LV3400, RHD4CZ5C061LV4300, RHD4CZ5L07LV4300, RHD4CZ5RA07LV4300, RHD4GNLVZ2FT1500 SS | -148.02d |
| RHD4GNSLZ5FT1600 |  | Final Testing and Commissioning for Street Lighting Network - FT-Z5-SL | 30d | 2027-12-19 | 2028-01-23 | RHD4CZ5A014SL6100, RHD4CZ5C051SL6100, RHD4CZ5C061SL6100, RHD4CZ5L016SL6100, RHD4CZ5L07SL6100, RHD4CZ5RA07SL6100, RHD4CZ5A014SL1500, RHD4CZ5C051SL1500, RHD4CZ5C061SL1500, RHD4CZ5L016SL1500, RHD4CZ5L07SL1500, RHD4CZ5L08SL1500, RHD4CZ5RA07SL1500, RHD4CZ5A014SL3400, RHD4CZ5C051SL3400, RHD4CZ5C061SL3400, RHD4CZ5L016SL3400, RHD4CZ5L07SL3400, RHD4CZ5L08SL3400, RHD4CZ5RA07SL3400, RHD4CZ5L07SL2400 | -124.02d |
| RHD4GNTCZ5FT1800 |  | Final Testing and Commissioning for Telecommunications Network - FT-Z5-TC | 30d | 2028-03-16 | 2028-04-19 | RHD4CZ5A014TC2400, RHD4CZ5C051TC2400, RHD4CZ5C061TC2400, RHD4CZ5L016TC2400, RHD4CZ5L07TC2400, RHD4CZ5L08TC2400, RHD4CZ5RA07TC2400, RHD4GNTCZ4FT1800, RHD4CZ5C051TC3400, RHD4GNSLZ5FT1600, RHD4GNCCTVZ4FT2000 | -166d |
| RHD4GNICTZ5FT1900 |  | Final Testing and Commissioning for ICT Network - FT-Z5-ICT | 30d | 2028-05-29 | 2028-07-02 | RHD4CZ5A014ICT2400, RHD4CZ5C051ICT2400, RHD4CZ5C061ICT2400, RHD4CZ5L016ICT2400, RHD4CZ5L07ICT2400, RHD4CZ5L08ICT2400, RHD4CZ5RA07ICT2400, RHD4GNICTZ4FT1900 SS, RHD4CZ5C061ICT3400 | -146d |
| RHD4GNSTZ5FT1000 |  | Final Testing and Commissioning for Storm Network - FT-Z5-ST | 12d | 2028-05-29 | 2028-06-11 | RHD4CZ5A014ST8500, RHD4CZ5L07ST8500, RHD4CZ5A014ST7500, RHD4CZ5C051ST7500, RHD4CZ5C061ST7500, RHD4CZ5L016ST7500, RHD4CZ5L07ST7500, RHD4CZ5L08ST7500, RHD4CZ5A014ST3500, RHD4CZ5C051ST3500, RHD4CZ5L016ST3500, RHD4CZ5L07ST3500, RHD4CZ5L08ST3500, RHD4CZ5A014ST3501, RHD4CZ5C051ST3501, RHD4CZ5C061ST3501, RHD4CZ5L016ST3501, RHD4CZ5L07ST3501, RHD4CZ5A014ST3502, RHD4CZ5L016ST3502, RHD4CZ5L07ST3502, RHD4CZ5L08ST3502, RHD4CZ5L07ST1406, RHD4CZ5L07ST1407, RHD4CZ5L07ST1408, RHD4CZ5A014ST1411, RHD4CZ5A014ST1400, RHD4CZ5L08ST1400, RHD4CZ5A014ST1401, RHD4CZ5L07ST1401, RHD4CZ5L08ST1401, RHD4CZ5A014ST1402, RHD4CZ5C051ST1402, RHD4CZ5L07ST1402, RHD4CZ5A014ST1403, RHD4CZ5C051ST1403, RHD4CZ5L016ST1403, RHD4CZ5L07ST1403, RHD4CZ5C061ST1404, RHD4CZ5A014ST9400, RHD4CZ5A014ST2400, RHD4CZ5C051ST2400, RHD4CZ5C061ST2400, RHD4CZ5L016ST2400, RHD4CZ5L07ST2400, RHD4CZ5L08ST2400, RHD4CZ5A014ST2401, RHD4CZ5L07ST2401, RHD4CZ5A014ST8400, RHD4CZ5L07ST8400, RHD4CZ5A014ST3400, RHD4CZ5C051ST3400, RHD4CZ5L016ST3400, RHD4CZ5L07ST3400, RHD4CZ5L08ST3400, RHD4CZ5A014ST3401, RHD4CZ5C051ST3401, RHD4CZ5C061ST3401, RHD4CZ5L016ST3401, RHD4CZ5L07ST3401, RHD4CZ5A014ST3402, RHD4CZ5L016ST3402, RHD4CZ5L07ST3402, RHD4CZ5L08ST3402, RHD4CZ5A014ST7400, RHD4CZ5C051ST7400, RHD4CZ5C061ST7400, RHD4CZ5L016ST7400, RHD4CZ5L07ST7400, RHD4CZ5L08ST7400, RHD4CZ5L08ST4500, RHD4CZ5L08ST4600, RHD4GNSTZ2FT1000 SS, RHD4CTUN1Z5STG21380, RHD4CTUN1Z5STG21900, RHD4CTUN1Z5STG21170 | -134d |
| RHD4GNCCTVZ5FT2000 |  | Final Testing and Commissioning for Security "CCTV" Network - FT-Z5-CCTV | 30d | 2028-06-10 | 2028-07-13 | RHD4CZ5C061CCTV1500, RHD4CZ5L016CCTV1500, RHD4CZ5L07CCTV1500, RHD4CZ5RA07CCTV1500, RHD4CZ5C061CCTV4200, RHD4CZ5L016CCTV4200, RHD4CZ5L07CCTV4200, RHD4CZ5RA07CCTV4200, RHD4CZ5C061CCTV4100, RHD4CZ5L016CCTV4100, RHD4CZ5L07CCTV4100, RHD4CZ5RA07CCTV4100, RHD4CZ5C051CCTV2100, RHD4CZ5RA07CCTV6100, RHD4CZ5C061CCTV6100, RHD4GNCCTVZ4FT2000 SS, RHD4CZ5L07CCTV6100, RHD4CZ1C081DM2000 | -147d |
| RHD4GNIRRZ5FT1300 |  | Final Testing and Commissioning for Irrigation Network - FT-Z5-IRR | 30d | 2028-06-12 | 2028-07-16 | RHD4CZ5C051IRR1400, RHD4CZ5L07IRR1400, RHD4CZ5L08IRR1400, RHD4CZ5C061IRR1402, RHD4CZ5L016IRR1402, RHD4CZ5L08IRR1402, RHD4CZ5RA07IRR1402, RHD4CZ5A014IRR1403, RHD4CZ5L016IRR1404, RHD4CZ5C051IRR3203, RHD4CZ5C051IRR3200, RHD4CZ5L07IRR3200, RHD4CZ5L08IRR3200, RHD4CZ5RA07IRR3200, RHD4CZ5C051IRR3202, RHD4CZ5L07IRR3202, RHD4CZ5RA07IRR3202, RHD4GNIRRZ8FT1300 SS | -146d |
| RHD4GNMVZ5FT1400 |  | Final Testing and Commissioning for Medium Voltage Network - FT-Z5-MV | 30d | 2028-06-12 | 2028-07-16 | RHD4CZ5C061MV5400, RHD4CZ5RA07MV5400, RHD4CZ5A014MV4200, RHD4CZ5L08MV4200, RHD4CZ5A014MV3401, RHD4CZ5C061MV3401, RHD4CZ5L08MV3401, RHD4CZ5RA07MV3401, RHD4CZ5A014MV3400, RHD4CZ5C061MV3400, RHD4CZ5L08MV3400, RHD4CZ5RA07MV3400, RHD4CZ5C061MV3301, RHD4CZ5RA07MV3301, RHD4CZ5A014MV3300, RHD4CZ5C051MV3300, RHD4CZ5C061MV3300, RHD4CZ5L016MV3300, RHD4CZ5L07MV3300, RHD4CZ5L08MV3300, RHD4CZ5RA07MV3300, RHD4GNMVZ4FT1400 SS, RHD4CZ5L016MV3401 | -146d |
| RHD4GNPTZ5FT1200 |  | Final Testing and Commissioning for Potable Water Network - FT-Z5-PT | 30d | 2028-06-12 | 2028-07-16 | RHD4CZ5A014PT4400, RHD4CZ5L016PT4400, RHD4CZ5L07PT4400, RHD4CZ5L08PT4400, RHD4CZ5C051PT1400, RHD4CZ5L016PT1400, RHD4CZ5L08PT1400, RHD4CZ5C051PT1401, RHD4CZ5C061PT1401, RHD4CZ5L016PT1401, RHD4CZ5L07PT1401, RHD4CZ5L08PT1401, RHD4CZ5RA07PT1401, RHD4CZ5A014PT1402, RHD4CZ5L016PT1402, RHD4CZ5L07PT1403, RHD4CZ5A014PT4500, RHD4CZ5L016PT4500, RHD4CZ5L07PT4500, RHD4CZ5L08PT4500, RHD4CZ5A014PT3203, RHD4CZ5L07PT3203, RHD4CZ5L08PT3203, RHD4CZ5L07PT3201, RHD4CZ5C051PT3200, RHD4CZ5C061PT3200, RHD4CZ5L016PT3200, RHD4CZ5L07PT3200, RHD4CZ5L08PT3200, RHD4CZ5RA07PT3200, RHD4CZ5A014PT3202, RHD4CZ5C061PT3202, RHD4CZ5L016PT3202, RHD4CZ5L07PT3202, RHD4CZ5RA07PT3202, RHD4CZ5A014PT4300, RHD4CZ5L016PT4300, RHD4CZ5L07PT4300, RHD4CZ5L08PT4300, RHD4CZ5A014PT4200, RHD4CZ5L016PT4200, RHD4CZ5L07PT4200, RHD4CZ5L08PT4200, RHD4GNPTZ6FT1200 SS | -146d |
| RHD4GNSWZ5FT1100 |  | Final Testing and Commissioning for Sewage Network - FT-Z5-SW | 12d | 2028-06-12 | 2028-06-25 | RHD4CZ5C061SW3500, RHD4CZ5C061SW3501, RHD4CZ5L016SW3500, RHD4CZ5L07SW3500, RHD4CZ5L08SW3500, RHD4CZ5RA07SW3500, RHD4CZ5C061SW1400, RHD4CZ5L016SW1400, RHD4CZ5L08SW1400, RHD4CZ5C061SW1401, RHD4CZ5L08SW2900, RHD4CZ5A014SW2400, RHD4CZ5C051SW2400, RHD4CZ5C061SW2400, RHD4CZ5L016SW2400, RHD4CZ5L07SW2400, RHD4CZ5L08SW2400, RHD4CZ5RA07SW2400, RHD4CZ5C061SW3400, RHD4CZ5C061SW3401, RHD4CZ5L016SW3400, RHD4CZ5L07SW3400, RHD4CZ5L08SW3400, RHD4CZ5RA07SW3400, RHD4GNSWZ4FT1100, RHD4CZ5L08SW6100 | -166d |
|  | 9222 | **RHD4-02-002-Final Testing and Commissioning - FT-Z6** |  | 2027-10-09 | 2028-07-16 |  |  |
| RHD4GNLVZ6FT1500 |  | Final Testing and Commissioning for Low Voltage Network - FT-Z6-LV | 30d | 2027-10-09 | 2027-11-13 | RHD4CZ6A015LV3400, RHD4CZ6A02LV3400, RHD4CZ6C052LV3400, RHD4CZ6C062LV3400, RHD4GNLVZ2FT1500 SS | -176.02d |

| ID | WBS | Task | Duration | Start | Finish | Predecessors | Total float |
| --- | --- | --- | --- | --- | --- | --- | --- |
| RHD4GNSLZ6FT1600 |  | Final Testing and Commissioning for Street Lighting Network - FT-Z6-SL | 30d | 2027-11-06 | 2027-12-11 | RHD4CZ6A015SL6100, RHD4CZ6A02SL6100, RHD4CZ6C052SL6100, RHD4CZ6C062SL6100, RHD4CZ6A015SL3400, RHD4CZ6A02SL3400, RHD4CZ6C052SL3400, RHD4CZ6C062SL3400, RHD4CZ6RA01SL3400, RHD4CZ6C062SL1500, RHD4CZ6A015SL1500, RHD4CZ6C052SL1500, RHD4CZ6A02SL1500, RHD4CZ6RA01SL1500 | -183.02d |
| RHD4GNTCZ6FT1800 |  | Final Testing and Commissioning for Telecommunications Network - FT-Z6-TC | 30d | 2027-11-30 | 2028-01-04 | RHD4CZ6A015TC2400, RHD4CZ6A02TC2400, RHD4CZ6C052TC2400, RHD4CZ6C062TC2400, RHD4CZ6RA01TC2400, RHD4GNLVZ6FT1500 | -191.02d |
| RHD4GNCCTVZ6FT2000 |  | Final Testing and Commissioning for Security "CCTV" Network - FT-Z6-CCTV | 30d | 2028-01-08 | 2028-02-12 | RHD4CZ6RA01CCTV4100, RHD4CZ6RA01CCTV1500, RHD4CZ6RA01CCTV4200, RHD4CZ6RA01CCTV5200, RHD4CZ6A015CCTV6100, RHD4CZ6A02CCTV6100 | -192.02d |
| RHD4GNICTZ6FT1900 |  | Final Testing and Commissioning for ICT Network - FT-Z6-ICT | 30d | 2028-05-29 | 2028-07-02 | RHD4CZ6A015ICT2400, RHD4CZ6A02ICT2400, RHD4CZ6C052ICT2400, RHD4CZ6C062ICT2400, RHD4GNICTZ4FT1900 SS | -130d |
| RHD4GNSTZ6FT1000 |  | Final Testing and Commissioning for Storm Network - FT-Z6-ST | 12d | 2028-05-29 | 2028-06-11 | RHD4CZ6A015ST1400, RHD4CZ6A02ST1400, RHD4CZ6C052ST1400, RHD4CZ6C062ST1400, RHD4CZ6A015ST1401, RHD4CZ6A02ST1401, RHD4CZ6C052ST1401, RHD4CZ6C062ST1401, RHD4CZ6A015ST1402, RHD4CZ6C052ST1402, RHD4CZ6C062ST1402, RHD4CZ6A015ST1403, RHD4CZ6C062ST1403, RHD4CZ6C062ST1404, RHD4CZ6A015ST2400, RHD4CZ6A02ST2400, RHD4CZ6C052ST2400, RHD4CZ6C062ST2400, RHD4CZ6C052ST2401, RHD4CZ6C062ST2401, RHD4CZ6C052ST8400, RHD4CZ6C062ST8400, RHD4CZ6A015ST3400, RHD4CZ6A02ST3400, RHD4CZ6C052ST3400, RHD4CZ6C062ST3400, RHD4CZ6A015ST3401, RHD4CZ6C052ST3401, RHD4CZ6C062ST3401, RHD4CZ6A015ST7400, RHD4CZ6A02ST7400, RHD4CZ6C052ST7400, RHD4CZ6C062ST7400, RHD4CZ6C062ST3501, RHD4CZ6C062ST3500, RHD4CZ6C062ST7500, RHD4CZ6C062ST8500, RHD4CZ6A015ST3501, RHD4CZ6A015ST3500, RHD4CZ6C052ST3501, RHD4CZ6C052ST3500, RHD4CZ6C052ST7500, RHD4CZ6C052ST8500, RHD4CZ6A02ST7500, RHD4CZ6A02ST3500, RHD4CZ6A015ST7500, RHD4GNSTZ2FT1000 SS, RHD4CZ6A02ST1500, RHD4CZ6CH6ST1130 | -161d |
| RHD4GNIRRZ6FT1300 |  | Final Testing and Commissioning for Irrigation Network - FT-Z6-IRR | 30d | 2028-06-12 | 2028-07-16 | RHD4CZ6A015IRR1400, RHD4CZ6C052IRR1400, RHD4CZ6C062IRR1400, RHD4CZ6A015IRR3203, RHD4CZ6C062IRR3203, RHD4CZ6A015IRR3200, RHD4CZ6C052IRR3200, RHD4CZ6A015IRR3202, RHD4GNIRRZ8FT1300 SS | -138d |
| RHD4GNMVZ6FT1400 |  | Final Testing and Commissioning for Medium Voltage Network - FT-Z6-MV | 30d | 2028-06-12 | 2028-07-16 | RHD4CZ6C052MV4200, RHD4CZ6C052MV3401, RHD4CZ6C062MV3401, RHD4CZ6C052MV3400, RHD4CZ6C062MV3400, RHD4CZ6C052MV3300, RHD4CZ6C062MV3300, RHD4GNMVZ4FT1400 SS | -138d |
| RHD4GNPTZ6FT1200 |  | Final Testing and Commissioning for Potable Water Network - FT-Z6-PT | 18d | 2028-06-12 | 2028-07-02 | RHD4CZ6A015PT4400, RHD4CZ6C052PT4400, RHD4CZ6C062PT4400, RHD4CZ6C052PT1400, RHD4CZ6C062PT1400, RHD4CZ6C052PT1401, RHD4CZ6C062PT1401, RHD4CZ6A015PT1402, RHD4CZ6A015PT4500, RHD4CZ6C052PT4500, RHD4CZ6C062PT4500, RHD4CZ6A015PT3200, RHD4CZ6C052PT3200, RHD4CZ6C062PT3200, RHD4CZ6A015PT3202, RHD4CZ6C052PT3202, RHD4CZ6A015PT4300, RHD4CZ6C052PT4300, RHD4CZ6C062PT4300, RHD4GNSWZ4FT1100 | -158d |
| RHD4GNSWZ6FT1100 |  | Final Testing and Commissioning for Sewage Network - FT-Z6-SW | 12d | 2028-06-12 | 2028-06-25 | RHD4CZ6C052SW3500, RHD4CZ6C062SW3500, RHD4CZ6C052SW2400, RHD4CZ6C062SW2400, RHD4CZ6C052SW3400, RHD4CZ6C062SW3400, RHD4GNSWZ5FT1100 SS | -154d |
|  | 9223 | **RHD4-02-002-Final Testing and Commissioning - FT-Z7** |  | 2027-12-15 | 2028-07-16 |  |  |
| RHD4GNLVZ7FT1500 |  | Final Testing and Commissioning for Low Voltage Network - FT-Z7-LV | 30d | 2027-12-15 | 2028-01-19 | RHD4CZ7A012LV3400, RHD4CZ7C02LV3400, RHD4CZ7C032LV3400, RHD4CZ7L131LV3400, RHD4CZ7L03LV3400, RHD4CZ7RA03LV3400, RHD4CZ7L03LV4300, RHD4CZ7RA03LV4300, RHD4GNLVZ2FT1500 SS | -184.02d |
| RHD4GNSLZ7FT1600 |  | Final Testing and Commissioning for Street Lighting Network - FT-Z7-SL | 30d | 2028-01-19 | 2028-02-24 | RHD4CZ7A012SL1500, RHD4CZ7C013SL1500, RHD4CZ7C02SL1500, RHD4CZ7C032SL1500, RHD4CZ7L131SL1500, RHD4CZ7L015SL1500, RHD4CZ7L03SL1500, RHD4CZ7RA03SL1500, RHD4CZ7RA05SL1500, RHD4CZ7A012SL3400, RHD4CZ7C013SL3400, RHD4CZ7C02SL3400, RHD4CZ7C032SL3400, RHD4CZ7L131SL3400, RHD4CZ7L015SL3400, RHD4CZ7L03SL3400, RHD4CZ7RA03SL3400, RHD4CZ7RA05SL3400 | -188.02d |
| RHD4GNCCTVZ7FT2000 |  | Final Testing and Commissioning for Security "CCTV" Network - FT-Z7-CCTV | 30d | 2028-04-16 | 2028-05-24 | RHD4CZ7C032CCTV1500, RHD4CZ7L03CCTV1500, RHD4CZ7RA03CCTV1500, RHD4CZ7C02CCTV4200, RHD4CZ7C032CCTV4200, RHD4CZ7L03CCTV4200, RHD4CZ7RA03CCTV4200, RHD4CZ7L131CCTV2100, RHD4CZ7L015CCTV2100, RHD4GNCCTVZ4FT2000 SS, RHD4CZ7C02CCTV1400 | -157.02d |
| RHD4GNTCZ7FT1800 |  | Final Testing and Commissioning for Telecommunications Network - FT-Z7-TC | 30d | 2028-04-20 | 2028-05-28 | RHD4CZ7A012TC2400, RHD4CZ7C013TC2400, RHD4CZ7C02TC2400, RHD4CZ7C032TC2400, RHD4CZ7L131TC2400, RHD4CZ7L015TC2400, RHD4CZ7L03TC2400, RHD4CZ7A012TC3400, RHD4CZ7C02TC3400, RHD4CZ7C032TC3400, RHD4CZ7L131TC3400, RHD4CZ7L015TC3400, RHD4CZ7L03TC3400, RHD4GNTCZ5FT1800 | -135d |
| RHD4GNICTZ7FT1900 |  | Final Testing and Commissioning for ICT Network - FT-Z7-ICT | 30d | 2028-05-29 | 2028-07-02 | RHD4CZ7A012ICT2400, RHD4CZ7C013ICT2400, RHD4CZ7C02ICT2400, RHD4CZ7C032ICT2400, RHD4CZ7L131ICT2400, RHD4CZ7L015ICT2400, RHD4CZ7L03ICT2400, RHD4CZ7RA03ICT2400, RHD4CZ7RA05ICT2400, RHD4GNICTZ4FT1900 SS | -163d |
| RHD4GNSTZ7FT1000 |  | Final Testing and Commissioning for Storm Network - FT-Z7-ST | 12d | 2028-05-29 | 2028-06-11 | RHD4CZ7A012ST8500, RHD4CZ7C02ST8500, RHD4CZ7A012ST7500, RHD4CZ7C02ST7500, RHD4CZ7L131ST7500, RHD4CZ7L015ST7500, RHD4CZ7L03ST7500, RHD4CZ7C02ST3500, RHD4CZ7L015ST3500, RHD4CZ7C02ST3501, RHD4CZ7L131ST3501, RHD4CZ7L015ST3501, RHD4CZ7C02ST3502, RHD4CZ7L03ST3502, RHD4CZ7C02ST1408, RHD4CZ7C02ST1409, RHD4CZ7C02ST1400, RHD4CZ7C02ST1401, RHD4CZ7L131ST1403, RHD4CZ7L015ST1403, RHD4CZ7L131ST1404, RHD4CZ7L015ST1404, RHD4CZ7L131ST1405, RHD4CZ7A012ST2400, RHD4CZ7C02ST2400, RHD4CZ7L131ST2400, RHD4CZ7L015ST2400, RHD4CZ7L03ST2400, RHD4CZ7A012ST8400, RHD4CZ7C02ST8400, RHD4CZ7C02ST3400, RHD4CZ7L015ST3400, RHD4CZ7C02ST3401, RHD4CZ7L131ST3401, RHD4CZ7L015ST3401, RHD4CZ7C02ST3402, RHD4CZ7L03ST3402, RHD4CZ7A012ST7400, RHD4CZ7C02ST7400, RHD4CZ7L131ST7400, RHD4CZ7L015ST7400, RHD4CZ7L03ST7400, RHD4GNSTZ2FT1000 SS | -136d |
| RHD4GNIRRZ7FT1300 |  | Final Testing and Commissioning for Irrigation Network - FT-Z7-IRR | 30d | 2028-06-12 | 2028-07-16 | RHD4CZ7C02IRR1400, RHD4CZ7L131IRR1400, RHD4CZ7L015IRR1400, RHD4CZ7L03IRR1400, RHD4CZ7A012IRR1403, RHD4CZ7C013IRR1404, RHD4CZ7C02IRR1404, RHD4CZ7L03IRR1404, RHD4CZ7L131IRR3203, RHD4CZ7L015IRR3203, RHD4CZ7L03IRR3203, RHD4CZ7C02IRR3201, RHD4CZ7L03IRR3201, RHD4CZ7C02IRR3200, RHD4CZ7L131IRR3200, RHD4CZ7L015IRR3200, RHD4CZ7L03IRR3200, RHD4CZ7L015IRR3202, RHD4GNIRRZ8FT1300 SS | -158d |
| RHD4GNMVZ7FT1400 |  | Final Testing and Commissioning for Medium Voltage Network - FT-Z7-MV | 30d | 2028-06-12 | 2028-07-16 | RHD4CZ7L03MV4200, RHD4CZ7C02MV3401, RHD4CZ7L131MV3401, RHD4CZ7L03MV3401, RHD4CZ7C02MV3400, RHD4CZ7L131MV3400, RHD4CZ7L03MV3400, RHD4CZ7L03MV3301, RHD4CZ7RA03MV3301, RHD4CZ7A012MV3300, RHD4CZ7C013MV3300, RHD4CZ7C02MV3300, RHD4CZ7C032MV3300, RHD4CZ7L131MV3300, RHD4CZ7L015MV3300, RHD4CZ7L03MV3300, RHD4GNMVZ4FT1400 SS | -158d |
| RHD4GNPTZ7FT1200 |  | Final Testing and Commissioning for Potable Water Network - FT-Z7-PT | 30d | 2028-06-12 | 2028-07-16 | RHD4CZ7A012PT4400, RHD4CZ7C032PT4400, RHD4CZ7L131PT4400, RHD4CZ7L015PT4400, RHD4CZ7L03PT4400, RHD4CZ7L131PT1400, RHD4CZ7L015PT1400, RHD4CZ7L03PT1400, RHD4CZ7C02PT1401, RHD4CZ7C032PT1401, RHD4CZ7L131PT1401, RHD4CZ7L015PT1401, RHD4CZ7L03PT1401, RHD4CZ7C032PT1402, RHD4CZ7A012PT1403, RHD4CZ7A012PT4500, RHD4CZ7C032PT4500, RHD4CZ7L131PT4500, RHD4CZ7L015PT4500, RHD4CZ7L03PT4500, RHD4CZ7C02PT3203, RHD4CZ7L131PT3203, RHD4CZ7A012PT3201, RHD4CZ7C02PT3200, RHD4CZ7C032PT3200, RHD4CZ7L131PT3200, RHD4CZ7L015PT3200, RHD4CZ7C02PT3202, RHD4CZ7C032PT3202, RHD4CZ7L015PT3202, RHD4CZ7L03PT3202, RHD4CZ7A012PT4300, RHD4CZ7C032PT4300, RHD4CZ7L131PT4300, RHD4CZ7L015PT4300, RHD4CZ7L03PT4300, RHD4GNPTZ6FT1200 SS | -158d |
| RHD4GNSWZ7FT1100 |  | Final Testing and Commissioning for Sewage Network - FT-Z7-SW | 12d | 2028-06-26 | 2028-07-09 | RHD4CZ7L03SW1400, RHD4CZ7L03SW1401, RHD4CZ7L015SW2400, RHD4CZ7L03SW2400, RHD4CZ7L015SW3400, RHD4CZ7L03SW3400, RHD4CZ7L015SW3500, RHD4CZ7L03SW3500, RHD4GNSWZ6FT1100 | -154d |
|  | 9224 | **RHD4-02-002-Final Testing and Commissioning - FT-Z8** |  | 2027-09-08 | 2028-07-16 |  |  |
| RHD4GNLVZ8FT1500 |  | Final Testing and Commissioning for Low Voltage Network - FT-Z8-LV | 30d | 2027-09-08 | 2027-10-14 | RHD4CZ8A011LV3400, RHD4CZ8C014LV3400, RHD4CZ4L01LV3400, RHD4CZ8RA04LV3400, RHD4CZ8A011LV4300, RHD4CZ8C014LV4300, RHD4CZ8RA04LV4300, RHD4GNLVZ2FT1500 SS | -121.02d |
| RHD4GNSLZ8FT1600 |  | Final Testing and Commissioning for Street Lighting Network - FT-Z8-SL | 30d | 2027-10-24 | 2027-11-28 | RHD4CZ8A011SL1500, RHD4CZ8C014SL1500, RHD4CZ4L01SL1500, RHD4CZ8L04SL1500, RHD4CZ8RA04SL1500, RHD4CZ8A011SL3400, RHD4CZ8C014SL3400, RHD4CZ4L01SL3400, RHD4CZ8L04SL3400, RHD4CZ8RA04SL3400 | -139.02d |
| RHD4GNCCTVZ8FT2000 |  | Final Testing and Commissioning for Security "CCTV" Network - FT-Z8-CCTV | 30d | 2028-02-21 | 2028-04-01 | RHD4CZ8A011CCTV2100, RHD4CZ4L01CCTV2100, RHD4CZ8L04CCTV2100, RHD4CZ8RA04CCTV2100, RHD4CZ8A011CCTV1500, RHD4CZ8L04CCTV1500, RHD4CZ8RA04CCTV1500 | -114.02d |
| RHD4GNTCZ8FT1800 |  | Final Testing and Commissioning for Telecommunications Network - FT-Z8-TC | 30d | 2028-04-20 | 2028-05-28 | RHD4CZ8A011TC2400, RHD4CZ8C014TC2400, RHD4CZ4L01TC2400, RHD4CZ8L04TC2400, RHD4GNTCZ5FT1800 | -140d |
| RHD4GNICTZ8FT1900 |  | Final Testing and Commissioning for ICT Network - FT-Z8-ICT | 30d | 2028-05-29 | 2028-07-02 | RHD4CZ8A011ICT2400, RHD4CZ8C014ICT2400, RHD4CZ4L01ICT2400, RHD4CZ8L04ICT2400, RHD4CZ8RA04ICT2400, RHD4GNICTZ4FT1900 SS | -163d |
| RHD4GNSTZ8FT1000 |  | Final Testing and Commissioning for Storm Network - FT-Z8-ST | 12d | 2028-05-29 | 2028-06-11 | RHD4CZ8A011ST7500, RHD4CZ8L04ST7500, RHD4CZ8A011ST3500, RHD4CZ8A011ST3501, RHD4CZ8L04ST3501, RHD4CZ8L04ST3502, RHD4CZ8A011ST1400, RHD4CZ8A011ST1401, RHD4CZ8A011ST1402, RHD4CZ8A011ST1403, RHD4CZ8A011ST1404, RHD4CZ8L04ST1404, RHD4CZ8L04ST1405, RHD4CZ8A011ST2400, RHD4CZ8L04ST2400, RHD4CZ8A011ST3400, RHD4CZ8A011ST3401, RHD4CZ8L04ST3401, RHD4CZ8L04ST3402, RHD4CZ8A011ST7400, RHD4CZ8L04ST7400, RHD4GNSTZ2FT1000 SS | -161d |
| RHD4GNIRRZ8FT1300 |  | Final Testing and Commissioning for Irrigation Network - FT-Z8-IRR | 30d | 2028-06-12 | 2028-07-16 | RHD4CZ8L04IRR1400, RHD4CZ8L04IRR3200, RHD4GNPTZ6FT1200 SS | -158d |
| RHD4GNMVZ8FT1400 |  | Final Testing and Commissioning for Medium Voltage Network - FT-Z8-MV | 30d | 2028-06-12 | 2028-07-16 | RHD4CZ8A011MV3401, RHD4CZ8C014MV3401, RHD4CZ8RA04MV3401, RHD4CZ8A011MV3400, RHD4CZ8C014MV3400, RHD4CZ8RA04MV3400, RHD4CZ8A011MV3301, RHD4CZ8C014MV3301, RHD4CZ8RA04MV3301, RHD4CZ8A011MV3300, RHD4CZ8C014MV3300, RHD4CZ4L01MV3300, RHD4CZ8L04MV3300, RHD4CZ8A011MV5400, RHD4CZ8C014MV5400, RHD4CZ8RA04MV5400, RHD4GNMVZ4FT1400 SS | -158d |
| RHD4GNPTZ8FT1200 |  | Final Testing and Commissioning for Potable Water Network - FT-Z8-PT | 30d | 2028-06-12 | 2028-07-16 | RHD4CZ8L04PT1400, RHD4CZ4L01PT1401, RHD4CZ8L04PT1401, RHD4CZ8A011PT1403, RHD4CZ8A011PT4500, RHD4CZ4L01PT4500, RHD4CZ8L04PT4500, RHD4CZ8A011PT3201, RHD4CZ4L01PT3200, RHD4CZ8L04PT3200, RHD4CZ8A011PT3202, RHD4CZ8A011PT4300, RHD4CZ4L01PT4300, RHD4CZ8L04PT4300, RHD4GNPTZ6FT1200 SS | -158d |
| RHD4GNSWZ8FT1100 |  | Final Testing and Commissioning for Sewage Network - FT-Z8-SW | 12d | 2028-06-26 | 2028-07-09 | RHD4GNSWZ7FT1100 SS | -152d |
|  | 9225 | **RHD4-02-002-Final Testing and Commissioning - FT-Z9** |  | 2027-12-25 | 2028-08-15 |  |  |
| RHD4GNLVZ9FT1500 |  | Final Testing and Commissioning for Low Voltage Network - FT-Z9-LV | 30d | 2027-12-25 | 2028-01-29 | RHD4CZ9C071LV3400, RHD4CZ9L02LV3400, RHD4CZ9L05LV3400, RHD4CZ9L06LV3400, RHD4CZ9C071SL1500, RHD4CZ9L02SL1500, RHD4CZ9L05SL1500, RHD4CZ9L06SL1500, RHD4GNLVZ2FT1500 SS | -113.02d |
| RHD4GNSLZ9FT1600 |  | Final Testing and Commissioning for Street Lighting Network - FT-Z9-SL | 30d | 2027-12-27 | 2028-01-31 | RHD4CZ9C071SL1500, RHD4CZ9L02SL1500, RHD4CZ9L05SL1500, RHD4CZ9L06SL1500, RHD4CZ9C071SL6100, RHD4CZ9L02SL6100, RHD4CZ9L05SL6100, RHD4CZ9L06SL6100, RHD4CZ9L02SL4300 | -128.02d |
| RHD4GNTCZ9FT1800 |  | Final Testing and Commissioning for Telecommunications Network - FT-Z9-TC | 30d | 2028-03-18 | 2028-04-22 | RHD4CZ9C071TC2400, RHD4CZ9L02TC2400, RHD4CZ9L05TC2400, RHD4CZ9L06TC2400, RHD4GNTCZ6FT1800 | -117.02d |
| RHD4GNSTZ9FT1000 |  | Final Testing and Commissioning for Storm Network - FT-Z9-ST | 12d | 2028-05-29 | 2028-06-11 | RHD4CZ9C071ST7500, RHD4CZ9L02ST7500, RHD4CZ9L05ST7500, RHD4CZ9L06ST7500, RHD4CZ9C071ST3500, RHD4CZ9L02ST3500, RHD4CZ9L05ST3500, RHD4CZ9L06ST3500, RHD4CZ9C071ST3501, RHD4CZ9L02ST3501, RHD4CZ9L06ST3501, RHD4CZ9C071ST3502, RHD4CZ9L02ST3502, RHD4CZ9L06ST3502, RHD4CZ9C071ST1406, RHD4CZ9L02ST1406, RHD4CZ9L06ST1406, RHD4CZ9C071ST1407, RHD4CZ9L02ST1407, RHD4CZ9L02ST1408, RHD4CZ9C071ST1400, RHD4CZ9L06ST1400, RHD4CZ9C071ST1401, RHD4CZ9L02ST1401, RHD4CZ9L05ST1401, RHD4CZ9C071ST1402, RHD4CZ9L02ST1402, RHD4CZ9L05ST1402, RHD4CZ9L06ST1403, RHD4CZ9L02ST1404, RHD4CZ9L06ST1404, RHD4CZ9C071ST1405, RHD4CZ9L02ST1405, RHD4CZ9L06ST1405, RHD4CZ9C071ST2400, RHD4CZ9L02ST2400, RHD4CZ9L05ST2400, RHD4CZ9L06ST2400, RHD4CZ9C071ST3400, RHD4CZ9L02ST3400, RHD4CZ9L05ST3400, RHD4CZ9L06ST3400, RHD4CZ9C071ST3401, RHD4CZ9L02ST3401, RHD4CZ9L06ST3401, RHD4CZ9C071ST3402, RHD4CZ9L02ST3402, RHD4CZ9L06ST3402, RHD4CZ9C071ST7400, RHD4CZ9L02ST7400, RHD4CZ9L05ST7400, RHD4CZ9L06ST7400, RHD4GNSTZ2FT1000 SS | -161d |
| RHD4GNIRRZ9FT1300 |  | Final Testing and Commissioning for Irrigation Network - FT-Z9-IRR | 30d | 2028-06-12 | 2028-07-16 | RHD4CZ9C071IRR1400, RHD4CZ9L02IRR1400, RHD4CZ9L06IRR1400, RHD4CZ9C071IRR1407, RHD4CZ9L02IRR1407, RHD4CZ9L05IRR1407, RHD4CZ9L02IRR3203, RHD4CZ9L02IRR3200, RHD4CZ9L06IRR3200, RHD4CZ9L02IRR3202, RHD4GNIRRZ8FT1300 SS, RHD4PRSHLDOSIRR1300, RHD4PRSHLSTAGIRR1300, RHD4PRSHLDOSIRR1100, RHD4PRSHLSTAGIRR1100, RHD4PRSHLDOSIRR1200, RHD4PRSHLDOSIRR1400, RHD4PRSHLSTAGIRR1200, RHD4PRSHLSTAGIRR1400, RHD4ENSDZ9APPIRR140, RHD4CZ9L06IRR1100 | -158d |
| RHD4GNMVZ9FT1400 |  | Final Testing and Commissioning for Medium Voltage Network - FT-Z9-MV | 30d | 2028-06-12 | 2028-07-16 | RHD4CZ9L02MV4200, RHD4CZ9L06MV4200, RHD4CZ9L02MV3401, RHD4CZ9L06MV3401, RHD4CZ9L02MV3400, RHD4CZ9L06MV3400, RHD4CZ9L02MV3301, RHD4CZ9C071MV3300, RHD4CZ9L02MV3300, RHD4CZ9L05MV3300, RHD4CZ9L06MV3300, RHD4CZ9L02MV5100, RHD4GNMVZ4FT1400 SS | -158d |
| RHD4GNPTZ9FT1200 |  | Final Testing and Commissioning for Potable Water Network - FT-Z9-PT | 30d | 2028-06-12 | 2028-07-16 | RHD4CZ9L02PT1400, RHD4CZ9L06PT1400, RHD4CZ9C071PT1401, RHD4CZ9L02PT1401, RHD4CZ9L05PT1401, RHD4CZ9L06PT1401, RHD4CZ9C071PT1402, RHD4CZ9C071PT4500, RHD4CZ9L02PT4500, RHD4CZ9L05PT4500, RHD4CZ9L06PT4500, RHD4CZ9C071PT3203, RHD4CZ9L02PT3203, RHD4CZ9L05PT3203, RHD4CZ9L06PT3203, RHD4CZ9C071PT3200, RHD4CZ9L02PT3200, RHD4CZ9L05PT3200, RHD4CZ9L06PT3200, RHD4CZ9C071PT3202, RHD4CZ9C071PT4300, RHD4CZ9L02PT4300, RHD4CZ9L05PT4300, RHD4CZ9L06PT4300, RHD4GNPTZ6FT1200 SS | -158d |
| RHD4GNICTZ9FT1900 |  | Final Testing and Commissioning for ICT Network - FT-Z9-ICT | 30d | 2028-06-21 | 2028-07-25 | RHD4CZ9C071ICT2400, RHD4CZ9L02ICT2400, RHD4CZ9L05ICT2400, RHD4CZ9L06ICT2400, RHD4GNICTZ4FT1900 SS | -180d |
| RHD4GNSWZ9FT1100 |  | Final Testing and Commissioning for Sewage Network - FT-Z9-SW | 12d | 2028-06-26 | 2028-07-09 | RHD4CZ9L02SW3500, RHD4CZ9L06SW3500, RHD4CZ9L02SW2400, RHD4CZ9L06SW2400, RHD4CZ9L02SW3400, RHD4CZ9L06SW3400, RHD4GNSWZ7FT1100 SS, RHD4PRSHLDOSSW1408, RHD4PRSHLSTAGSW1408, RHD4PRSHLDOSSW1308, RHD4PRSHLSTAGSW1308 | -154d |
| RHD4GNCCTVZ9FT2000 |  | Final Testing and Commissioning for Security "CCTV" Network - FT-Z9-CCTV | 20d | 2028-07-24 | 2028-08-15 | RHD4CZ9C071CCTV4100, RHD4CZ9L02CCTV4100, RHD4CZ9C071CCTV1500, RHD4CZ9L02CCTV1500, RHD4CZ9C071CCTV3100, RHD4CZ9L02CCTV3100, RHD4GNCCTVZ4FT2000 SS, RHD4CZ9L06ICT2400, RHD4CZ9L06TC2400 | -178d |
|  | 1 | **RHD4-02-002-Final Testing and Commissioning - FT-LFTS** |  | 2028-04-10 | 2028-08-10 |  |  |
| RHD4GNSWL1LFTSFT1000 |  | Final Testing and Commissioning for Sewage Lift Station 1 - FT-LFTS-SWL1 | 30d | 2028-04-10 | 2028-05-17 | RHD4CSWL1B07D151214, RHD4CSWL1B07D151191, RHD4CSWL1B07D151180, RHD4CSWL1B07D151178, RHD4CSWL1B07D101162, RHD4CZ1B03EX1000 | -179d |
| RHD4GNSTL1LFTSFT1200 |  | Final Testing and Commissioning for Storm Lift Station 1 - FT-LFTS-STL1 | 7d | 2028-08-03 | 2028-08-10 | RHD4CSTL1B07D151185, RHD4CSTL1B07D151178, RHD4CSTL1B07D151170, RHD4CSTL1B07D161155, RHD4CSTL1B07D161152, RHD4CSTL1B07D161133, RHD4GNSTZ5FT1000, RHD4CZ3C011RD9100, RHD4CZ1L101RD4100, RHD4CZ5RA07RD9200, RHD4CZ3C011RD7100, RHD4CZ1L101RD7100, RHD4CSTL1B07D161145 | -179d |
|  | 9226 | **RHD4-02-002-Close Out - HO** |  | 2027-10-20 | 2029-01-17 |  |  |
|  | 9227 | **RHD4-02-002-As Built Drawings - AS** |  | 2027-10-20 | 2029-01-16 |  |  |
|  | 9228 | **RHD4-02-002-As Built Drawing Submittals** |  | 2027-10-20 | 2029-01-07 |  |  |
|  | 9229 | **RHD4-02-002-As Built Drawing Submittals-Z1** |  | 2028-01-16 | 2028-12-10 |  |  |
| RHD4HOASZ1SUBLV160 |  | Prepare and Submit As-Built Drawings for Low Voltage Network for LV-Z1-SUB | 8d | 2028-01-16 | 2028-01-24 | RHD4HOASZ2SUBLV160, RHD4GNLVZ1FT1500 | -183d |
| RHD4HOASZ1SUBST110 |  | Prepare and Submit As-Built Drawings for Storm Water Network for ST-Z1-SUB | 14d | 2028-07-10 | 2028-07-25 | RHD4GNSTZ9FT1000, RHD4HOASZ6SUBTC190, RHD4HOASZ2SUBST110, RHD4GNSTZ1FT1000 | -133d |
| RHD4HOASZ1SUBTC190 |  | Prepare and Submit As-Built Drawings for Telecommunications Network for TC-Z1-SUB | 15d | 2028-08-26 | 2028-09-11 | RHD4HOASZ2SUBTC190, RHD4HOASZ6APPSW120, RHD4HOASSTL1APP1000, RHD4GNTCZ1FT1800 | -180d |
| RHD4HOASZ1SUBIRR140 |  | Prepare and Submit As-Built Drawings for Irrigation Network for IRR-Z1-SUB | 10d | 2028-09-02 | 2028-09-12 | RHD4HOASZ2SUBIRR140, RHD4GNIRRZ1FT1300 | -146d |
| RHD4HOASZ1SUBMV150 |  | Prepare and Submit As-Built Drawings for Medium Voltage Network for MV-Z1-SUB | 8d | 2028-09-02 | 2028-09-10 | RHD4HOASZ2SUBMV150, RHD4GNMVZ1FT1400 | -146d |
| RHD4HOASZ1SUBEW100 |  | Prepare and Submit As-Built Drawings for Road Plans and Profile for EW-Z1-SUB | 9d | 2028-09-03 | 2028-09-12 | RHD4CZ1C081RD4100, RHD4CZ1L101RD4100, RHD4CZ1C081RD8100, RHD4CZ1B03BF2000, RHD4HOASZ2SUBEW100 | -147d |
| RHD4HOASZ1SUBPT130 |  | Prepare and Submit As-Built Drawings for Potable Water Network for PT-Z1-SUB | 8d | 2028-09-06 | 2028-09-14 | RHD4HOASZ2SUBPT130, RHD4GNPTZ1FT1200 | -146d |
| RHD4HOASZ1SUBSW120 |  | Prepare and Submit As-Built Drawings for Sewage Network for SW-Z1-SUB | 8d | 2028-09-18 | 2028-09-27 | RHD4HOASZ2SUBSW120, RHD4GNSWZ1FT1100 | -146d |
| RHD4HOASZ1SUBSL170 |  | Prepare and Submit As-Built Drawings for Street Lighting Network for SL-Z1-SUB | 15d | 2028-09-24 | 2028-10-10 | RHD4CZ1C081SL6100, RHD4CZ1L101SL6100, RHD4HOASZ2SUBSL170, RHD4GNSLZ1FT1600 | -173d |
| RHD4HOASZ1SUBCCTV210 |  | Prepare and Submit As-Built Drawings for Security Network for CCTV-Z1-SUB | 8d | 2028-10-11 | 2028-10-19 | RHD4CZ1C081CCTV6100, RHD4CZ1L101CCTV6100, RHD4HOASZ2SUBCCTV210, RHD4GNCCTVZ1FT2000 | -182d |
| RHD4HOASZ1SUBRD220 |  | Prepare and Submit As-Built Drawings for Road Works( KERBING AND PAVEMENT ) for RD-Z1-SUB | 6d | 2028-11-11 | 2028-11-16 | RHD4CZ1C081RD4100, RHD4CZ1L101RD4100, RHD4CZ1C081RD7100, RHD4CZ1L101RD7100, RHD4HOASZ2SUBRD220 | -198d |
| RHD4HOASZ1SUBICT200 |  | Prepare and Submit As-Built Drawings for Information and Communication Technologies Network for ICT-Z1-SUB | 8d | 2028-12-02 | 2028-12-10 | RHD4CZ1L101ICT5200, RHD4HOASZ2SUBICT200, RHD4GNICTZ1FT1900 | -197d |
|  | 9230 | **RHD4-02-002-As Built Drawing Submittals-Z2** |  | 2028-01-06 | 2028-11-30 |  |  |
| RHD4HOASZ2SUBLV160 |  | Prepare and Submit As-Built Drawings for Low Voltage Network for LV-Z2-SUB | 8d | 2028-01-06 | 2028-01-15 | RHD4CZ2L102LV3400, RHD4HOASZ3SUBLV160, RHD4GNLVZ2FT1500 | -183d |
| RHD4HOASZ2SUBST110 |  | Prepare and Submit As-Built Drawings for Storm Water Network for ST-Z2-SUB | 12d | 2028-06-26 | 2028-07-09 | RHD4CZ2L102ST4600, RHD4HOASZ3SUBST110, RHD4GNSTZ2FT1000 | -146d |
| RHD4HOASZ2SUBTC190 |  | Prepare and Submit As-Built Drawings for Telecommunications Network for TC-Z2-SUB | 6d | 2028-08-19 | 2028-08-24 | RHD4HOASZ3SUBTC190, RHD4GNCCTVZ9FT2000, RHD4GNTCZ2FT1800 | -180d |
| RHD4HOASZ2SUBEW100 |  | Prepare and Submit As-Built Drawings for Road Plans and Profile for EW-Z2-SUB | 10d | 2028-08-22 | 2028-09-02 | RHD4CZ2C082RD8100, RHD4CZ2B05EX1001, RHD4CZ2B05EX1000, RHD4HOASZ3SUBEW100 | -147d |
| RHD4HOASZ2SUBIRR140 |  | Prepare and Submit As-Built Drawings for Irrigation Network for IRR-Z2-SUB | 8d | 2028-08-23 | 2028-08-31 | RHD4HOASZ3SUBIRR140, RHD4GNIRRZ2FT1300 | -146d |
| RHD4HOASZ2SUBMV150 |  | Prepare and Submit As-Built Drawings for Medium Voltage Network for MV-Z2-SUB | 8d | 2028-08-23 | 2028-08-31 | RHD4HOASZ3SUBMV150, RHD4GNMVZ2FT1400 | -146d |
| RHD4HOASZ2SUBPT130 |  | Prepare and Submit As-Built Drawings for Potable Water Network for PT-Z2-SUB | 8d | 2028-08-28 | 2028-09-05 | RHD4HOASZ3SUBPT130, RHD4GNPTZ2FT1200 | -146d |
| RHD4HOASZ2SUBSL170 |  | Prepare and Submit As-Built Drawings for Street Lighting Network for SL-Z2-SUB | 15d | 2028-09-05 | 2028-09-21 | RHD4HOASZ3SUBSL170, RHD4GNSWZ1FT1100, RHD4HOASZ9SUBRD220, RHD4HOASSTL1SUB1200, RHD4HOASSTL1SUB1300, RHD4GNSLZ2FT1600 | -173d |

| ID | WBS | Task | Duration | Start | Finish | Predecessors | Total float |
| --- | --- | --- | --- | --- | --- | --- | --- |
| RHD4HOASZ2SUBSW120 |  | Prepare and Submit As-Built Drawings for Sewage Network for SW-Z2-SUB | 6d | 2028-09-11 | 2028-09-17 | RHD4HOASZ3SUBSW120, RHD4GNSWZ2FT1100 | -146d |
| RHD4HOASZ2SUBCCTV210 |  | Prepare and Submit As-Built Drawings for Security Network for CCTV-Z2-SUB | 8d | 2028-10-02 | 2028-10-10 | RHD4CZ2C082CCTV6100, RHD4CZ2L102CCTV6100, RHD4HOASZ3SUBCCTV210, RHD4GNCCTVZ2FT2000 | -182d |
| RHD4HOASZ2SUBRD220 |  | Prepare and Submit As-Built Drawings for Road Works( KERBING AND PAVEMENT ) for RD-Z2-SUB | 6d | 2028-11-04 | 2028-11-09 | RHD4CZ2C082RD4100, RHD4CZ2L102RD4100, RHD4CZ2L011RD4100, RHD4CZ2C082RD7100 SS, RHD4CZ2L102RD7100, RHD4CZ2L011RD7100, RHD4HOASZ3SUBRD220 | -198d |
| RHD4HOASZ2SUBICT200 |  | Prepare and Submit As-Built Drawings for Information and Communication Technologies Network for ICT-Z2-SUB | 14d | 2028-11-15 | 2028-11-30 | RHD4HOASZ3SUBICT200, RHD4GNICTZ2FT1900 | -197d |
|  | 9231 | **RHD4-02-002-As Built Drawing Submittals-Z3** |  | 2027-12-28 | 2028-11-14 |  |  |
| RHD4HOASZ3SUBLV160 |  | Prepare and Submit As-Built Drawings for Low Voltage Network for LV-Z3-SUB | 8d | 2027-12-28 | 2028-01-05 | RHD4HOASZ4SUBLV160, RHD4GNLVZ3FT1500 | -183d |
| RHD4HOASZ3SUBST110 |  | Prepare and Submit As-Built Drawings for Storm Water Network for ST-Z3-SUB | 12d | 2028-06-12 | 2028-06-25 | RHD4GNSTZ3FT1000 | -146d |
| RHD4HOASZ3SUBEW100 |  | Prepare and Submit As-Built Drawings for Road Plans and Profile for EW-Z3-SUB | 16d | 2028-08-03 | 2028-08-21 | RHD4CZ3BZ3BF2001, RHD4HOASZ4SUBEW100 | -147d |
| RHD4HOASZ3SUBSL170 |  | Prepare and Submit As-Built Drawings for Street Lighting Network for SL-Z3-SUB | 15d | 2028-08-09 | 2028-08-26 | RHD4HOASZ4SUBSL170, RHD4GNSLZ3FT1600 | -165d |
| RHD4HOASZ3SUBTC190 |  | Prepare and Submit As-Built Drawings for Telecommunications Network for TC-Z3-SUB | 6d | 2028-08-12 | 2028-08-17 | RHD4HOASZ4SUBTC190, RHD4GNPTZ1FT1200, RHD4GNIRRZ1FT1300, RHD4GNMVZ1FT1400, RHD4GNPTZ2FT1200, RHD4GNIRRZ2FT1300, RHD4GNMVZ2FT1400, RHD4GNPTZ3FT1200, RHD4GNIRRZ3FT1300, RHD4GNMVZ3FT1400, RHD4GNPTZ7FT1200, RHD4GNIRRZ7FT1300, RHD4GNMVZ7FT1400, RHD4GNSWZ8FT1100, RHD4GNPTZ8FT1200, RHD4GNMVZ8FT1400, RHD4GNPTZ9FT1200, RHD4GNIRRZ9FT1300, RHD4GNMVZ9FT1400, RHD4HOASZ4APPTC190, RHD4CZ3C083RD7100, RHD4GNTCZ3FT1800 | -180d |
| RHD4HOASZ3SUBIRR140 |  | Prepare and Submit As-Built Drawings for Irrigation Network for IRR-Z3-SUB | 8d | 2028-08-14 | 2028-08-22 | RHD4HOASZ4SUBIRR140, RHD4GNIRRZ3FT1300 | -146d |
| RHD4HOASZ3SUBMV150 |  | Prepare and Submit As-Built Drawings for Medium Voltage Network for MV-Z3-SUB | 8d | 2028-08-14 | 2028-08-22 | RHD4HOASZ4SUBMV150, RHD4GNMVZ3FT1400 | -146d |
| RHD4HOASZ3SUBPT130 |  | Prepare and Submit As-Built Drawings for Potable Water Network for PT-Z3-SUB | 8d | 2028-08-19 | 2028-08-27 | RHD4HOASZ4SUBPT130, RHD4GNPTZ3FT1200 | -146d |
| RHD4HOASZ3SUBSW120 |  | Prepare and Submit As-Built Drawings for Sewage Network for SW-Z3-SUB | 6d | 2028-09-04 | 2028-09-10 | RHD4HOASZ4SUBSW120, RHD4GNSWZ3FT1100 | -146d |
| RHD4HOASZ3SUBCCTV210 |  | Prepare and Submit As-Built Drawings for Security Network for CCTV-Z3-SUB | 8d | 2028-09-21 | 2028-10-01 | RHD4HOASZ4SUBCCTV210, RHD4GNCCTVZ3FT2000 | -182d |
| RHD4HOASZ3SUBICT200 |  | Prepare and Submit As-Built Drawings for Information and Communication Technologies Network for ICT-Z3-SUB | 16d | 2028-10-28 | 2028-11-14 | RHD4HOASZ4SUBICT200, RHD4GNICTZ3FT1900 | -197d |
| RHD4HOASZ3SUBRD220 |  | Prepare and Submit As-Built Drawings for Road Works( KERBING AND PAVEMENT ) for RD-Z3-SUB | 6d | 2028-10-28 | 2028-11-02 | RHD4CZ3C011RD4100, RHD4CZ3C083RD4100, RHD4CZ3L122RD4100, RHD4CZ3C011RD7100, RHD4CZ3C083RD7100, RHD4CZ3L122RD7100, RHD4HOASZ4SUBRD220 | -198d |
|  | 9232 | **RHD4-02-002-As Built Drawing Submittals-Z4** |  | 2027-11-22 | 2028-09-03 |  |  |
| RHD4HOASZ4SUBLV160 |  | Prepare and Submit As-Built Drawings for Low Voltage Network for LV-Z4-SUB | 8d | 2027-11-22 | 2027-12-01 | RHD4HOASZ6SUBLV160, RHD4GNLVZ4FT1500 | -160.02d |
| RHD4HOASZ4SUBSL170 |  | Prepare and Submit As-Built Drawings for Street Lighting Network for SL-Z4-SUB | 15d | 2027-12-28 | 2028-01-15 | RHD4HOASZ6SUBSL170, RHD4GNSLZ4FT1600 | -183.02d |
| RHD4HOASZ4SUBTC190 |  | Prepare and Submit As-Built Drawings for Telecommunications Network for TC-Z4-SUB | 16d | 2028-05-29 | 2028-06-15 | RHD4HOASZ6SUBTC190, RHD4GNTCZ4FT1800 | -148d |
| RHD4HOASZ4SUBEW100 |  | Prepare and Submit As-Built Drawings for Road Plans and Profile for EW-Z4-SUB | 6d | 2028-07-27 | 2028-08-02 | RHD4CZ4BZ4BF4001, RHD4CZ4B07BF4001, RHD4CZ4C012RD8100, RHD4CZ4A013RW1000, RHD4CZ4BZ4EX1001, RHD4HOASZ6SUBEW100 | -147d |
| RHD4HOASZ4SUBCCTV210 |  | Prepare and Submit As-Built Drawings for Security Network for CCTV-Z4-SUB | 8d | 2028-08-02 | 2028-08-10 | RHD4CZ4C031CCTV6100, RHD4CZ4L014CCTV6100, RHD4HOASZ6SUBCCTV210, RHD4GNCCTVZ4FT2000 | -147d |
| RHD4HOASZ4SUBIRR140 |  | Prepare and Submit As-Built Drawings for Irrigation Network for IRR-Z4-SUB | 8d | 2028-08-05 | 2028-08-13 | RHD4HOASZ6SUBIRR140, RHD4GNIRRZ4FT1300 | -146d |
| RHD4HOASZ4SUBMV150 |  | Prepare and Submit As-Built Drawings for Medium Voltage Network for MV-Z4-SUB | 8d | 2028-08-05 | 2028-08-13 | RHD4HOASZ6SUBMV150, RHD4GNMVZ4FT1400 | -146d |
| RHD4HOASZ4SUBST110 |  | Prepare and Submit As-Built Drawings for Storm Water Network for ST-Z4-SUB | 12d | 2028-08-07 | 2028-08-20 | RHD4HOASZ5SUBST110, RHD4HOASZ3SUBST110, RHD4HOASZ6SUBST110, RHD4GNSTZ4FT1000 | -146d |
| RHD4HOASZ4SUBICT200 |  | Prepare and Submit As-Built Drawings for Information and Communication Technologies Network for ICT-Z4-SUB | 16d | 2028-08-09 | 2028-08-27 | RHD4HOASZ6SUBICT200, RHD4GNICTZ4FT1900 | -146d |
| RHD4HOASZ4SUBPT130 |  | Prepare and Submit As-Built Drawings for Potable Water Network for PT-Z4-SUB | 8d | 2028-08-09 | 2028-08-17 | RHD4HOASZ6SUBPT130, RHD4GNPTZ4FT1200 | -146d |
| RHD4HOASZ4SUBRD220 |  | Prepare and Submit As-Built Drawings for Road Works( KERBING AND PAVEMENT ) for RD-Z4-SUB | 8d | 2028-08-19 | 2028-08-27 | RHD4CZ4A013RD4100, RHD4CZ4C012RD4100, RHD4CZ4C031RD4100, RHD4CZ4L014RD4100, RHD4CZ4L09RD4100, RHD4CZ4RA02RD4100, RHD4CZ4A013RD7100, RHD4CZ4C012RD7100, RHD4CZ4C031RD7100, RHD4CZ4L014RD7100, RHD4CZ4L09RD7100, RHD4CZ4RA02RD7100, RHD4HOASZ6SUBRD220 | -147d |
| RHD4HOASZ4SUBSW120 |  | Prepare and Submit As-Built Drawings for Sewage Network for SW-Z4-SUB | 12d | 2028-08-21 | 2028-09-03 | RHD4HOASZ4SUBST110, RHD4HOASZ6SUBSW120, RHD4GNSWZ4FT1100 | -146d |
|  | 9233 | **RHD4-02-002-As Built Drawing Submittals-Z5** |  | 2027-10-20 | 2028-08-09 |  |  |
| RHD4HOASZ5SUBLV160 |  | Prepare and Submit As-Built Drawings for Low Voltage Network for LV-Z5-SUB | 8d | 2027-10-20 | 2027-10-30 | RHD4GNLVZ5FT1500 | -148.02d |
| RHD4HOASZ5SUBSL170 |  | Prepare and Submit As-Built Drawings for Street Lighting Network for SL-Z5-SUB | 15d | 2028-01-23 | 2028-02-09 | RHD4GNSLZ5FT1600 | -124.02d |
| RHD4HOASZ5SUBTC190 |  | Prepare and Submit As-Built Drawings for Telecommunications Network for TC-Z5-SUB | 15d | 2028-04-20 | 2028-05-10 | RHD4GNTCZ5FT1800 | -148d |
| RHD4HOASZ5SUBSW120 |  | Prepare and Submit As-Built Drawings for Sewage Network for SW-Z5-SUB | 12d | 2028-06-26 | 2028-07-09 | RHD4GNSWZ5FT1100 | -166d |
| RHD4HOASZ5SUBICT200 |  | Prepare and Submit As-Built Drawings for Information and Communication Technologies Network for ICT-Z5-SUB | 16d | 2028-07-03 | 2028-07-20 | RHD4GNICTZ5FT1900 | -146d |
| RHD4HOASZ5SUBEW100 |  | Prepare and Submit As-Built Drawings for Road Plans and Profile for EW-Z5-SUB | 8d | 2028-07-09 | 2028-07-17 | RHD4CZ5C051RD7100, RHD4CZ5RA07RD9200, RHD4CZ5C061RD7100, RHD4CZ5L08RD7100, RHD4CZ5L016RD7100, RHD4CZ5A014RD7100, RHD4CZ5L07RD7100, RHD4CZ5A014RD8100 | -147d |
| RHD4HOASZ5SUBST110 |  | Prepare and Submit As-Built Drawings for Storm Water Network for ST-Z5-SUB | 12d | 2028-07-10 | 2028-07-23 | RHD4CZ5L08ST4600, RHD4HOASZ2SUBST110, RHD4GNSTZ5FT1000 | -146d |
| RHD4HOASZ5SUBCCTV210 |  | Prepare and Submit As-Built Drawings for Security Network for CCTV-Z5-SUB | 8d | 2028-07-15 | 2028-07-23 | RHD4CZ5L016CCTV6100, RHD4CZ5L07CCTV6100, RHD4GNCCTVZ5FT2000 | -147d |
| RHD4HOASZ5SUBIRR140 |  | Prepare and Submit As-Built Drawings for Irrigation Network for IRR-Z5-SUB | 8d | 2028-07-17 | 2028-07-25 | RHD4GNIRRZ5FT1300 | -146d |
| RHD4HOASZ5SUBMV150 |  | Prepare and Submit As-Built Drawings for Medium Voltage Network for MV-Z5-SUB | 8d | 2028-07-17 | 2028-07-25 | RHD4GNMVZ5FT1400 | -146d |
| RHD4HOASZ5SUBPT130 |  | Prepare and Submit As-Built Drawings for Potable Water Network for PT-Z5-SUB | 8d | 2028-07-17 | 2028-07-25 | RHD4GNPTZ5FT1200 | -146d |
| RHD4HOASZ5SUBRD220 |  | Prepare and Submit As-Built Drawings for Road Works( KERBING AND PAVEMENT ) for RD-Z5-SUB | 6d | 2028-08-03 | 2028-08-09 | RHD4CZ5A014RD4100, RHD4CZ5C051RD4100, RHD4CZ5C061RD4100, RHD4CZ5L016RD4100, RHD4CZ5L07RD4100, RHD4CZ5L08RD4100, RHD4CZ5RA07RD4100, RHD4CZ5C051RD7100, RHD4CZ5RA07RD7100, RHD4CZ5C061RD7100, RHD4CZ5A014RD7100, RHD4CZ5L016RD7100, RHD4CZ5L07RD7100, RHD4CZ5L08RD7100, RHD4HOASZ4SUBEW100 | -147d |
|  | 9234 | **RHD4-02-002-As Built Drawing Submittals-Z6** |  | 2027-11-13 | 2028-08-17 |  |  |
| RHD4HOASZ6SUBLV160 |  | Prepare and Submit As-Built Drawings for Low Voltage Network for LV-Z6-SUB | 8d | 2027-11-13 | 2027-11-22 | RHD4HOASZ5SUBLV160, RHD4GNLVZ6FT1500 | -160.02d |
| RHD4HOASZ6SUBSL170 |  | Prepare and Submit As-Built Drawings for Street Lighting Network for SL-Z6-SUB | 15d | 2027-12-11 | 2027-12-28 | RHD4GNSLZ6FT1600 | -183.02d |
| RHD4HOASZ6SUBTC190 |  | Prepare and Submit As-Built Drawings for Telecommunications Network for TC-Z6-SUB | 15d | 2028-05-11 | 2028-05-28 | RHD4HOASZ5SUBTC190, RHD4HOASZ5SUBTC190 FF, RHD4GNTCZ6FT1800 | -148d |
| RHD4HOASZ6SUBSW120 |  | Prepare and Submit As-Built Drawings for Sewage Network for SW-Z6-SUB | 14d | 2028-07-10 | 2028-07-25 | RHD4HOASZ5SUBSW120, RHD4HOASZ5SUBSW120 FF, RHD4GNSWZ6FT1100 | -166d |
| RHD4HOASZ6SUBEW100 |  | Prepare and Submit As-Built Drawings for Road Plans and Profile for EW-Z6-SUB | 8d | 2028-07-18 | 2028-07-26 | RHD4HOASTUN1APP1100 SS, RHD4HOASTUN1APP1200 SS, RHD4HOASZ5SUBEW100 | -147d |
| RHD4HOASZ6SUBICT200 |  | Prepare and Submit As-Built Drawings for Information and Communication Technologies Network for ICT-Z6-SUB | 16d | 2028-07-22 | 2028-08-08 | RHD4HOASZ5SUBICT200, RHD4GNICTZ6FT1900 | -146d |
| RHD4HOASZ6SUBCCTV210 |  | Prepare and Submit As-Built Drawings for Security Network for CCTV-Z6-SUB | 8d | 2028-07-24 | 2028-08-01 | RHD4HOASZ5SUBCCTV210, RHD4GNCCTVZ6FT2000 | -147d |
| RHD4HOASZ6SUBST110 |  | Prepare and Submit As-Built Drawings for Storm Water Network for ST-Z6-SUB | 12d | 2028-07-24 | 2028-08-06 | RHD4HOASZ5SUBST110, RHD4HOASZ5SUBST110 FF, RHD4GNSTZ6FT1000 | -146d |
| RHD4HOASZ6SUBIRR140 |  | Prepare and Submit As-Built Drawings for Irrigation Network for IRR-Z6-SUB | 8d | 2028-07-26 | 2028-08-03 | RHD4HOASZ5SUBIRR140, RHD4GNIRRZ6FT1300 | -146d |
| RHD4HOASZ6SUBMV150 |  | Prepare and Submit As-Built Drawings for Medium Voltage Network for MV-Z6-SUB | 8d | 2028-07-26 | 2028-08-03 | RHD4HOASZ5SUBMV150, RHD4GNMVZ6FT1400 | -146d |
| RHD4HOASZ6SUBPT130 |  | Prepare and Submit As-Built Drawings for Potable Water Network for PT-Z6-SUB | 12d | 2028-07-26 | 2028-08-08 | RHD4HOASZ6SUBSW120, RHD4HOASZ5SUBPT130, RHD4GNPTZ6FT1200 | -146d |
| RHD4HOASZ6SUBRD220 |  | Prepare and Submit As-Built Drawings for Road Works( KERBING AND PAVEMENT ) for RD-Z6-SUB | 7d | 2028-08-10 | 2028-08-17 | RHD4CZ6A015RD4100, RHD4CZ6A02RD4100, RHD4CZ6C052RD4100, RHD4CZ6C062RD4100, RHD4CZ6RA01RD4100, RHD4CZ6A02RD7100, RHD4CZ6RA01RD7100, RHD4CZ6C062RD7100, RHD4CZ6A015RD7100, RHD4CZ6C052RD7100, RHD4HOASZ5SUBRD220 | -147d |
|  | 9235 | **RHD4-02-002-As Built Drawing Submittals-Z7** |  | 2028-01-25 | 2028-12-19 |  |  |
| RHD4HOASZ7SUBLV160 |  | Prepare and Submit As-Built Drawings for Low Voltage Network for LV-Z7-SUB | 8d | 2028-01-25 | 2028-02-02 | RHD4HOASZ1SUBLV160, RHD4GNLVZ7FT1500 | -126d |
| RHD4HOASZ7SUBST110 |  | Prepare and Submit As-Built Drawings for Storm Water Network for ST-Z7-SUB | 12d | 2028-07-26 | 2028-08-08 | RHD4HOASZ5SUBST110, RHD4HOASZ1SUBST110, RHD4GNSTZ7FT1000 | -133d |
| RHD4HOASZ7SUBMV150 |  | Prepare and Submit As-Built Drawings for Medium Voltage Network for MV-Z7-SUB | 10d | 2028-09-11 | 2028-09-21 | RHD4HOASZ1SUBMV150, RHD4GNMVZ7FT1400 | -146d |
| RHD4HOASZ7SUBTC190 |  | Prepare and Submit As-Built Drawings for Telecommunications Network for TC-Z7-SUB | 15d | 2028-09-12 | 2028-09-30 | RHD4HOASZ1SUBTC190, RHD4GNTCZ7FT1800 | -180d |
| RHD4HOASZ7SUBEW100 |  | Prepare and Submit As-Built Drawings for Road Plans and Profile for EW-Z7-SUB | 8d | 2028-09-13 | 2028-09-21 | RHD4CZ7C02RD8100, RHD4HOASZ1SUBEW100 | -147d |
| RHD4HOASZ7SUBIRR140 |  | Prepare and Submit As-Built Drawings for Irrigation Network for IRR-Z7-SUB | 16d | 2028-09-13 | 2028-10-02 | RHD4CZ7A012IRR5100, RHD4HOASZ1SUBIRR140, RHD4GNIRRZ7FT1300 | -146d |
| RHD4HOASZ7SUBPT130 |  | Prepare and Submit As-Built Drawings for Potable Water Network for PT-Z7-SUB | 14d | 2028-09-16 | 2028-10-02 | RHD4HOASZ1SUBPT130, RHD4GNPTZ7FT1200 | -146d |
| RHD4HOASZ7SUBSW120 |  | Prepare and Submit As-Built Drawings for Sewage Network for SW-Z7-SUB | 12d | 2028-09-28 | 2028-10-11 | RHD4HOASZ1SUBSW120, RHD4GNSWZ7FT1100 | -146d |
| RHD4HOASZ7SUBSL170 |  | Prepare and Submit As-Built Drawings for Street Lighting Network for SL-Z7-SUB | 15d | 2028-10-11 | 2028-10-28 | RHD4CZ7C013SL6100, RHD4CZ7C02SL6100, RHD4CZ7RA03SL6100, RHD4HOASZ1SUBSL170, RHD4GNSLZ7FT1600 | -173d |
| RHD4HOASZ7SUBCCTV210 |  | Prepare and Submit As-Built Drawings for Security Network for CCTV-Z7-SUB | 13d | 2028-10-21 | 2028-11-04 | RHD4CZ7L131CCTV2100, RHD4CZ7C02CCTV6100, RHD4CZ7C032CCTV6100, RHD4CZ7L03CCTV6100, RHD4CZ7RA03CCTV6100, RHD4HOASZ1SUBCCTV210, RHD4GNCCTVZ7FT2000 | -182d |
| RHD4HOASZ7SUBRD220 |  | Prepare and Submit As-Built Drawings for Road Works( KERBING AND PAVEMENT ) for RD-Z7-SUB | 6d | 2028-11-18 | 2028-11-23 | RHD4CZ7A012RD4100, RHD4CZ7C013RD4100, RHD4CZ7C02RD4100, RHD4CZ7C032RD4100, RHD4CZ7L131RD4100, RHD4CZ7L015RD4100, RHD4CZ7L03RD4100, RHD4CZ7RA03RD4100, RHD4CZ7RA05RD4100, RHD4CZ7RA05RD9100, RHD4CZ7RA05RD7100, RHD4CZ7A012RD7100, RHD4CZ7C013RD7100, RHD4CZ7C02RD7100, RHD4CZ7C032RD7100, RHD4CZ7L131RD7100, RHD4CZ7L015RD7100, RHD4CZ7L03RD7100, RHD4CZ7RA03RD7100, RHD4HOASZ1SUBRD220 | -198d |
| RHD4HOASZ7SUBICT200 |  | Prepare and Submit As-Built Drawings for Information and Communication Technologies Network for ICT-Z7-SUB | 8d | 2028-12-11 | 2028-12-19 | RHD4HOASZ1SUBICT200, RHD4GNICTZ7FT1900 | -197d |
|  | 9236 | **RHD4-02-002-As Built Drawing Submittals-Z8** |  | 2028-02-03 | 2028-12-28 |  |  |

| ID | WBS | Task | Duration | Start | Finish | Predecessors | Total float |
| --- | --- | --- | --- | --- | --- | --- | --- |
| RHD4HOASZ8SUBLV160 |  | Prepare and Submit As-Built Drawings for Low Voltage Network for LV-Z8-SUB | 8d | 2028-02-03 | 2028-02-12 | RHD4HOASZ7SUBLV160, RHD4GNLVZ8FT1500 | -126d |
| RHD4HOASZ8SUBST110 |  | Prepare and Submit As-Built Drawings for Storm Water Network for ST-Z8-SUB | 12d | 2028-08-09 | 2028-08-22 | RHD4HOASZ5SUBST110, RHD4HOASZ7SUBST110, RHD4GNSTZ8FT1000 | -133d |
| RHD4HOASZ8SUBMV150 |  | Prepare and Submit As-Built Drawings for Medium Voltage Network for MV-Z8-SUB | 8d | 2028-09-24 | 2028-10-02 | RHD4HOASZ7SUBMV150, RHD4GNMVZ8FT1400 | -138d |
| RHD4HOASZ8SUBTC190 |  | Prepare and Submit As-Built Drawings for Telecommunications Network for TC-Z8-SUB | 15d | 2028-10-01 | 2028-10-17 | RHD4HOASZ7SUBTC190, RHD4GNTCZ8FT1800 | -180d |
| RHD4HOASZ8SUBIRR140 |  | Prepare and Submit As-Built Drawings for Irrigation Network for IRR-Z8-SUB | 16d | 2028-10-03 | 2028-10-21 | RHD4HOASZ7SUBIRR140, RHD4GNIRRZ8FT1300 | -146d |
| RHD4HOASZ8SUBPT130 |  | Prepare and Submit As-Built Drawings for Potable Water Network for PT-Z8-SUB | 16d | 2028-10-03 | 2028-10-21 | RHD4HOASZ7SUBPT130, RHD4GNPTZ8FT1200 | -146d |
| RHD4HOASZ8SUBSW120 |  | Prepare and Submit As-Built Drawings for Sewage Network for SW-Z8-SUB | 12d | 2028-10-12 | 2028-10-25 | RHD4HOASZ7SUBSW120, RHD4HOASZ7SUBSW120 FF, RHD4GNSWZ8FT1100 | -146d |
| RHD4HOASZ8SUBSL170 |  | Prepare and Submit As-Built Drawings for Street Lighting Network for SL-Z8-SUB | 15d | 2028-10-29 | 2028-11-14 | RHD4CZ8A011SL6100, RHD4CZ8C014SL6100, RHD4HOASZ7SUBSL170, RHD4GNSLZ8FT1600 | -173d |
| RHD4HOASZ8SUBCCTV210 |  | Prepare and Submit As-Built Drawings for Security Network for CCTV-Z8-SUB | 16d | 2028-11-05 | 2028-11-22 | RHD4CZ7L015CCTV2100, RHD4CZ8A011CCTV6100, RHD4CZ8L04CCTV6100, RHD4CZ8RA04CCTV6100, RHD4HOASZ7SUBCCTV210, RHD4GNCCTVZ8FT2000 | -182d |
| RHD4HOASZ8SUBEW100 |  | Prepare and Submit As-Built Drawings for Road Plans and Profile for EW-Z8-SUB | 8d | 2028-11-25 | 2028-12-03 | RHD4HOASZ8SUBRD220 SS, RHD4CZ8C014RD8100, RHD4CZ8A011RD8100, RHD4HOASZ7SUBEW100 | -198d |
| RHD4HOASZ8SUBRD220 |  | Prepare and Submit As-Built Drawings for Road Works( KERBING AND PAVEMENT ) for RD-Z8-SUB | 6d | 2028-11-25 | 2028-11-30 | RHD4CZ8A011RD4100, RHD4CZ8C014RD4100, RHD4CZ4L01RD4100, RHD4CZ8L04RD4100, RHD4CZ8RA04RD4100, RHD4CZ8RA04RD9100, RHD4CZ8A011RD7100, RHD4CZ8C014RD7100, RHD4CZ4L01RD7100, RHD4CZ8L04RD7100, RHD4CZ8RA04RD7100, RHD4HOASZ7SUBRD220 | -198d |
| RHD4HOASZ8SUBICT200 |  | Prepare and Submit As-Built Drawings for Information and Communication Technologies Network for ICT-Z8-SUB | 8d | 2028-12-20 | 2028-12-28 | RHD4HOASZ7SUBICT200, RHD4GNICTZ8FT1900 | -197d |
|  | 9237 | **RHD4-02-002-As Built Drawing Submittals-Z9** |  | 2028-02-13 | 2029-01-07 |  |  |
| RHD4HOASZ9SUBLV160 |  | Prepare and Submit As-Built Drawings for Low Voltage Network for LV-Z9-SUB | 8d | 2028-02-13 | 2028-02-21 | RHD4HOASZ8SUBLV160, RHD4GNLVZ9FT1500 | -126d |
| RHD4HOASZ9SUBST110 |  | Prepare and Submit As-Built Drawings for Storm Water Network for ST-Z9-SUB | 12d | 2028-08-23 | 2028-09-05 | RHD4HOASZ5SUBST110, RHD4HOASZ8SUBST110, RHD4GNSTZ9FT1000 | -133d |
| RHD4HOASZ9SUBRD220 |  | Prepare and Submit As-Built Drawings for Road Works( KERBING AND PAVEMENT ) for RD-Z9-SUB | 6d | 2028-08-29 | 2028-09-04 | RHD4CZ9C071RD4100, RHD4CZ9L02RD4100, RHD4CZ9L05RD4100, RHD4CZ9L06RD4100, RHD4CZ9C071RD7100, RHD4CZ9L02RD7100, RHD4CZ9L05RD7100, RHD4CZ9L06RD7100 | -173d |
| RHD4HOASZ9SUBMV150 |  | Prepare and Submit As-Built Drawings for Medium Voltage Network for MV-Z9-SUB | 8d | 2028-10-03 | 2028-10-11 | RHD4HOASZ8SUBMV150, RHD4GNMVZ9FT1400 | -130d |
| RHD4HOASZ9SUBTC190 |  | Prepare and Submit As-Built Drawings for Telecommunications Network for TC-Z9-SUB | 10d | 2028-10-18 | 2028-10-29 | RHD4CZ9L02TC5200, RHD4HOASZ8SUBTC190, RHD4GNTCZ9FT1800 | -180d |
| RHD4HOASZ9SUBIRR140 |  | Prepare and Submit As-Built Drawings for Irrigation Network for IRR-Z9-SUB | 16d | 2028-10-22 | 2028-11-08 | RHD4HOASZ8SUBIRR140, RHD4GNIRRZ9FT1300 | -146d |
| RHD4HOASZ9SUBPT130 |  | Prepare and Submit As-Built Drawings for Potable Water Network for PT-Z9-SUB | 16d | 2028-10-22 | 2028-11-08 | RHD4HOASZ8SUBPT130, RHD4GNPTZ9FT1200 | -146d |
| RHD4HOASZ9SUBSW120 |  | Prepare and Submit As-Built Drawings for Sewage Network for SW-Z9-SUB | 12d | 2028-10-26 | 2028-11-08 | RHD4HOASZ8SUBSW120, RHD4HOASZ8SUBSW120 FF, RHD4GNSWZ9FT1100 | -146d |
| RHD4HOASZ9SUBSL170 |  | Prepare and Submit As-Built Drawings for Street Lighting Network for SL-Z9-SUB | 15d | 2028-11-15 | 2028-12-02 | RHD4HOASZ8SUBSL170, RHD4GNSLZ9FT1600 | -173d |
| RHD4HOASZ9SUBCCTV210 |  | Prepare and Submit As-Built Drawings for Security Network for CCTV-Z9-SUB | 16d | 2028-11-23 | 2028-12-11 | RHD4CZ9C071CCTV6100, RHD4CZ9L02CCTV6100, RHD4CZ9L06ICT2400, RHD4CZ9L06TC2400, RHD4HOASZ8SUBCCTV210, RHD4GNCCTVZ9FT2000 | -182d |
| RHD4HOASZ9SUBEW100 |  | Prepare and Submit As-Built Drawings for Road Plans and Profile for EW-Z9-SUB | 8d | 2028-12-04 | 2028-12-12 | RHD4HOASZ8SUBRD220 SS, RHD4CZ9B36BF2000, RHD4HOASZ8SUBEW100 | -198d |
| RHD4HOASZ9SUBICT200 |  | Prepare and Submit As-Built Drawings for Information and Communication Technologies Network for ICT-Z9-SUB | 8d | 2028-12-30 | 2029-01-07 | RHD4HOASZ8SUBICT200, RHD4GNICTZ9FT1900 | -197d |
|  | 9238 | **RHD4-02-002-As Built Drawing Submittals-Tunne 1 - TUN1** |  | 2028-04-24 | 2028-05-10 |  |  |
| RHD4HOASTUN1SUB1000 |  | Prepare and Submit As-Built Drawings for TUNNEL 1 (PLANS) -Z5 for -TUN1-SUB | 12d | 2028-04-24 | 2028-05-10 | RHD4HOASSWL1SUB1000 | -179d |
| RHD4HOASTUN1SUB1100 |  | Prepare and Submit As-Built Drawings for TUNNEL 1 (SECTIONS) -Z5 for -TUN1-SUB | 12d | 2028-04-24 | 2028-05-10 | RHD4CTUN1Z5STG31210, RHD4CTUN1Z5STG31060, RHD4CTUN1Z5STG21310, RHD4CTUN1Z5STG21270, RHD4CTUN1Z5STG21210, RHD4CTUN1Z5STG11060, RHD4CTUN1Z5STG11210, RHD4HOASSWL1SUB1000, RHD4ENMARAPPTU100, RHD4CTUN1Z5STG21060, RHD4CTUN1Z5STG21050, RHD4CTUN1Z5STG21030, RHD4ENMSTUN2010, RHD4CTUN1Z5STG21040 | -167d |
| RHD4HOASTUN1SUB1200 |  | Prepare and Submit As-Built Drawings for TUNNEL 1 (BBS) -Z5 for -TUN1-SUB | 12d | 2028-04-24 | 2028-05-10 | RHD4CTUN1Z5STG31210, RHD4CTUN1Z5STG31060, RHD4CTUN1Z5STG21310, RHD4CTUN1Z5STG21270, RHD4CTUN1Z5STG21210, RHD4CTUN1Z5STG11060, RHD4CTUN1Z5STG11210, RHD4HOASSWL1SUB1000, RHD4ENMARAPPTU100, RHD4CTUN1Z5STG21060, RHD4CTUN1Z5STG21050, RHD4CTUN1Z5STG21030, RHD4ENMSTUN2010, RHD4CTUN1Z5STG21040 | -155d |
|  | 9240 | **RHD4-02-002-As Built Drawing Submittals-Sewage Lift Station 1 - SWL1** |  | 2028-04-10 | 2028-06-07 |  |  |
| RHD4HOASSWL1SUB1000 |  | Prepare and Submit As-Built Drawings for Sewage Lift Station 1 - Z3 - Structure Package for -SWL1-SUB | 12d | 2028-04-10 | 2028-04-23 | RHD4CSWL1B07D021007, RHD4CSWL1B07D021010, RHD4CSWL1B07D031039, RHD4CSWL1B07D031043, RHD4CSWL1B07D031047, RHD4CSWL1B07D031054, RHD4CSWL1B07D031173, RHD4CSWL1B07D031170, RHD4CSWL1B07D031188, RHD4CSWL1B07D031199, RHD4CSWL1B07D031209, RHD4GNSWL1LFTSFT1000 SS | -179d |
| RHD4HOASSWL1SUB1100 |  | Prepare and Submit As-Built Drawings for Sewage Lift Station 1 - Z3 - Architecture Package for -SWL1-SUB | 12d | 2028-04-24 | 2028-05-10 | RHD4CSWL1B07D091012, RHD4CSWL1B07D091070, RHD4CSWL1B07D071071, RHD4CSWL1B07D071072, RHD4CSWL1B07D071073, RHD4CSWL1B07D071074, RHD4CSWL1B07D071075, RHD4CSWL1B07D071076, RHD4CSWL1B07D091077, RHD4CSWL1B07D091079, RHD4CSWL1B07D091080, RHD4CSWL1B07D091086, RHD4CSWL1B07D091087, RHD4CSWL1B07D091088, RHD4CSWL1B07D101158, RHD4CSWL1B07D101159, RHD4CSWL1B07D101160, RHD4CSWL1B07D101161, RHD4CSWL1B07D101162, RHD4GNSWL1LFTSFT1000 SS, RHD4PRSHLDOSLFS1500, RHD4PRSHLSTAGLFS1500, RHD4CSWL1B07D091077 SS, RHD4HOASSWL1SUB1000, RHD4ENSWL1APPARC1100, RHD4GNPPSD1100, RHD4ENSDSWL1SUB2000, RHD4ENSDZ6SUBRD220, RHD4ENSDSTL1SUB2000 | -170d |
| RHD4HOASSWL1SUB1200 |  | Prepare and Submit As-Built Drawings for Sewage Lift Station 1 - Z3 - Mechanical Package for -SWL1-SUB | 12d | 2028-05-11 | 2028-05-24 | RHD4CSWL1B07D151032, RHD4CSWL1B07D151031, RHD4CSWL1B07D151030, RHD4CSWL1B07D151016, RHD4CSWL1B07D151017, RHD4CSWL1B07D151018, RHD4CSWL1B07D151019, RHD4CSWL1B07D151021, RHD4CSWL1B07D151023, RHD4CSWL1B07D151211, RHD4CSWL1B07D151212, RHD4CSWL1B07D151213, RHD4CSWL1B07D151214, RHD4CSWL1B07D151175, RHD4CSWL1B07D151180, RHD4CSWL1B07D151211 FF, RHD4CSWL1B07D151212 FF, RHD4CSWL1B07D151213 FF, RHD4CSWL1B07D151214 FF, RHD4CSWL1B07D151092, RHD4GNSWL1LFTSFT1000 SS, RHD4PRLOLSTAGLFS1100, RHD4PRSHLDOSLFS1800, RHD4PRSHLSTAGLFS1800, RHD4CSWL1B07D151178, RHD4HOASSWL1SUB1100, RHD4ENSWL1APPMEC1200, RHD4GNPPSD1100, RHD4ENSDSWL1SUB3000, RHD4ENSDZ6SUBRD220, RHD4ENSDSTL1SUB3000, RHD4GNCCTVZ2FT2000 | -170d |
| RHD4HOASSWL1SUB1300 |  | Prepare and Submit As-Built Drawings for Sewage Lift Station 1 - Z3 - Electrical Package for -SWL1-SUB | 12d | 2028-05-25 | 2028-06-07 | RHD4CSWL1B07D161153, RHD4CSWL1B07D161154, RHD4CSWL1B07D161155, RHD4CSWL1B07D161152, RHD4CSWL1B07D161145, RHD4CSWL1B07D161150, RHD4CSWL1B07D161141, RHD4CSWL1B07D161139, RHD4CSWL1B07D161137, RHD4CSWL1B07D161099, RHD4CSWL1B07D161103, RHD4CSWL1B07D161107, RHD4CSWL1B07D161111, RHD4CSWL1B07D161125, RHD4CSWL1B07D161131, RHD4GNSWL1LFTSFT1000, RHD4PRSHLDOSLFS2600, RHD4PRSHLSTAGLFS2600, RHD4ENSWL1APPELE1300, RHD4CSWL1B07D161108, RHD4HOASSWL1SUB1200 | -170d |
|  | 9242 | **RHD4-02-002-As Built Drawing Submittals-Storm Lift Station 1 - STL1** |  | 2028-08-12 | 2028-09-28 |  |  |
| RHD4HOASSTL1SUB1000 |  | Prepare and Submit As-Built Drawings for Storm Lift Station 1 - Z5 - Structure Package for -STL1-SUB | 6d | 2028-08-12 | 2028-08-17 | RHD4CSTL1B07D021006, RHD4CSTL1B07D021012, RHD4CSTL1B07D021015, RHD4CSTL1B07D031037, RHD4CSTL1B07D031040, RHD4CSTL1B07D031044, RHD4CSTL1B07D031048, RHD4CSTL1B07D031055, RHD4CSTL1B07D031062, RHD4CSTL1B07D031066, RHD4CSTL1B07D031070, RHD4CSTL1B07D031161, RHD4CSTL1B07D031164, RHD4CSTL1B07D031176, RHD4CSTL1B07D151184, RHD4GNSTL1LFTSFT1200 | -179d |
| RHD4HOASSTL1SUB1200 |  | Prepare and Submit As-Built Drawings for Storm Lift Station 1 - Z5 - Mechanical Package for -STL1-SUB | 16d | 2028-08-12 | 2028-08-29 | RHD4CSTL1B07D151023, RHD4CSTL1B07D151026, RHD4CSTL1B07D151027, RHD4CSTL1B07D151029, RHD4CSTL1B07D151030, RHD4CSTL1B07D151032, RHD4CSTL1B07D151033, RHD4CSTL1B07D151091, RHD4CSTL1B07D151092, RHD4CSTL1B07D151094, RHD4CSTL1B07D151093, RHD4CSTL1B07D151095, RHD4CSTL1B07D151096, RHD4CSTL1B07D151170, RHD4GNSTL1LFTSFT1200 | -168d |
| RHD4HOASSTL1SUB1300 |  | Prepare and Submit As-Built Drawings for Storm Lift Station 1 - Z5 - Electrical Package for -STL1-SUB | 14d | 2028-08-12 | 2028-08-27 | RHD4CSTL1B07D161100, RHD4CSTL1B07D161104, RHD4CSTL1B07D161108, RHD4CSTL1B07D161112, RHD4CSTL1B07D161115, RHD4CSTL1B07D161119, RHD4CSTL1B07D161125, RHD4CSTL1B07D161122, RHD4CSTL1B07D161131, RHD4CSTL1B07D161128, RHD4CSTL1B07D161133, RHD4CSTL1B07D161132, RHD4CSTL1B07D161137, RHD4CSTL1B07D161138, RHD4CSTL1B07D161152, RHD4CSTL1B07D161155, RHD4CSTL1B07D151178, RHD4CSTL1B07D151177, RHD4GNSTL1LFTSFT1200, RHD4ENSTL1APPELE1300, RHD4CSTL1B07D161133 SS, RHD4PRSHLDOSLFS2400, RHD4PRSHLSTAGLFS2400 | -166d |
| RHD4HOASSTL1SUB1100 |  | Prepare and Submit As-Built Drawings for Storm Lift Station 1 - Z5 - Architecture Package for -STL1-SUB | 6d | 2028-09-21 | 2028-09-28 | RHD4CSTL1B07D021002, RHD4CSTL1B07D021008, RHD4CSTL1B07D021016, RHD4CSTL1B07D051022, RHD4CSTL1B07D031036, RHD4CSTL1B07D031051, RHD4CSTL1B07D071058, RHD4CSTL1B07D071059, RHD4CSTL1B07D091072, RHD4CSTL1B07D071078, RHD4CSTL1B07D091079, RHD4CSTL1B07D091082, RHD4CSTL1B07D091081, RHD4CSTL1B07D091088, RHD4CSTL1B07D091087, RHD4CSTL1B07D091090, RHD4CSTL1B07D031157, RHD4CSTL1B07D031165, RHD4CSTL1B07D021166, RHD4CSTL1B07D031172, RHD4CSTL1B07D151180, RHD4GNSTL1LFTSFT1200, RHD4GNMVZ1FT1400, RHD4GNLVZ1FT1500, RHD4GNCCTVZ1FT2000, RHD4GNMVZ2FT1400, RHD4GNLVZ2FT1500, RHD4GNCCTVZ2FT2000, RHD4GNMVZ3FT1400, RHD4GNLVZ3FT1500, RHD4GNCCTVZ3FT2000, RHD4GNMVZ4FT1400, RHD4GNLVZ4FT1500, RHD4GNCCTVZ4FT2000, RHD4GNMVZ5FT1400, RHD4GNLVZ5FT1500, RHD4GNCCTVZ5FT2000, RHD4GNMVZ6FT1400, RHD4GNLVZ6FT1500, RHD4GNCCTVZ6FT2000, RHD4GNMVZ7FT1400, RHD4GNLVZ7FT1500, RHD4GNCCTVZ7FT2000, RHD4GNMVZ8FT1400, RHD4GNLVZ8FT1500, RHD4GNCCTVZ8FT2000, RHD4GNMVZ9FT1400, RHD4GNLVZ9FT1500, RHD4GNCCTVZ9FT2000, RHD4GNTCZ2FT1800, RHD4GNTCZ3FT1800, RHD4GNPTZ1FT1200, RHD4GNIRRZ1FT1300, RHD4GNPTZ2FT1200, RHD4GNIRRZ2FT1300, RHD4GNPTZ3FT1200, RHD4GNIRRZ3FT1300, RHD4GNPTZ4FT1200, RHD4GNIRRZ4FT1300, RHD4GNPTZ5FT1200, RHD4GNIRRZ5FT1300, RHD4GNPTZ6FT1200, RHD4GNIRRZ6FT1300, RHD4GNPTZ7FT1200, RHD4GNIRRZ7FT1300, RHD4GNPTZ8FT1200, RHD4GNIRRZ8FT1300, RHD4GNPTZ9FT1200, RHD4GNIRRZ9FT1300, RHD4CSTL1B07D051085, RHD4CSTL1B07D091018, RHD4PRSHLDOSLFS1500, RHD4PRSHLSTAGLFS1500, RHD4ENSTL1APPARC1100, RHD4GNPPSD1100, RHD4ENSDZ6SUBRD220, RHD4ENSDSTL1SUB2000 | -167d |
|  | 9244 | **RHD4-02-002-As Built Drawing Approvals** |  | 2027-10-30 | 2029-01-16 |  |  |
|  | 9245 | **RHD4-02-002-As Built Drawing Approvals-Z1** |  | 2028-01-25 | 2028-12-19 |  |  |
| RHD4HOASZ1APPLV160 |  | Review and Approval of As-Built Drawings for Low Voltage Network for LV-Z1-APP | 8d | 2028-01-25 | 2028-02-02 | RHD4HOASZ2APPLV160, RHD4HOASZ1SUBLV160 | -183d |
| RHD4HOASZ1APPMV150 |  | Review and Approval of As-Built Drawings for Medium Voltage Network for MV-Z1-APP | 10d | 2028-09-11 | 2028-09-21 | RHD4HOASZ2APPMV150, RHD4HOASZ1SUBMV150 | -146d |
| RHD4HOASZ1APPTC190 |  | Review and Approval of As-Built Drawings for Telecommunications Network for TC-Z1-APP | 15d | 2028-09-12 | 2028-09-30 | RHD4HOASZ2APPTC190, RHD4HOASZ1SUBTC190 | -149d |
| RHD4HOASZ1APPEW100 |  | Review and Approval of As-Built Drawings for Road Plans and Profile for EW-Z1-APP | 8d | 2028-09-13 | 2028-09-21 | RHD4HOASZ2APPEW100, RHD4HOASZ1SUBEW100 | -147d |
| RHD4HOASZ1APPST110 |  | Review and Approval of As-Built Drawings for Storm Water Network for ST-Z1-APP | 12d | 2028-10-03 | 2028-10-16 | RHD4HOASZ2APPST110, RHD4HOASZ1SUBST110 | -146d |
| RHD4HOASZ1APPIRR140 |  | Review and Approval of As-Built Drawings for Irrigation Network for IRR-Z1-APP | 12d | 2028-10-05 | 2028-10-18 | RHD4HOASZ2APPIRR140, RHD4HOASZ1SUBIRR140 | -146d |
| RHD4HOASZ1APPPT130 |  | Review and Approval of As-Built Drawings for Potable Water Network for PT-Z1-APP | 12d | 2028-10-05 | 2028-10-18 | RHD4HOASZ2APPPT130, RHD4HOASZ1SUBPT130 | -146d |
| RHD4HOASZ1APPSL170 |  | Review and Approval of As-Built Drawings for Street Lighting Network for SL-Z1-APP | 15d | 2028-10-11 | 2028-10-28 | RHD4HOASZ2APPSL170, RHD4HOASZ2APPSL170 FF, RHD4HOASZ1SUBSL170 | -173d |
| RHD4HOASZ1APPSW120 |  | Review and Approval of As-Built Drawings for Sewage Network for SW-Z1-APP | 6d | 2028-10-15 | 2028-10-21 | RHD4HOASZ2APPSW120, RHD4HOASZ1SUBSW120 | -146d |
| RHD4HOASZ1APPCCTV210 |  | Review and Approval of As-Built Drawings for Security Network for CCTV-Z1-APP | 13d | 2028-10-21 | 2028-11-04 | RHD4HOASZ2APPCCTV210, RHD4HOASZ1SUBCCTV210 | -182d |
| RHD4HOASZ1APPRD220 |  | Review and Approval of As-Built Drawings for Road Works( KERBING AND PAVEMENT ) for RD-Z1-APP | 6d | 2028-11-22 | 2028-11-28 | RHD4HOASZ2APPRD220, RHD4HOASZ1SUBRD220 | -196d |
| RHD4HOASZ1APPICT200 |  | Review and Approval of As-Built Drawings for Information and Communication Technologies Network for ICT-Z1-APP | 8d | 2028-12-11 | 2028-12-19 | RHD4HOASZ2APPICT200, RHD4HOASZ1SUBICT200 | -197d |
|  | 9246 | **RHD4-02-002-As Built Drawing Approvals-Z2** |  | 2028-01-16 | 2028-12-10 |  |  |
| RHD4HOASZ2APPLV160 |  | Review and Approval of As-Built Drawings for Low Voltage Network for LV-Z2-APP | 8d | 2028-01-16 | 2028-01-24 | RHD4HOASZ3APPLV160, RHD4HOASZ2SUBLV160 | -183d |
| RHD4HOASZ2APPTC190 |  | Review and Approval of As-Built Drawings for Telecommunications Network for TC-Z2-APP | 6d | 2028-08-26 | 2028-08-31 | RHD4HOASZ3APPTC190, RHD4HOASZ2SUBTC190 | -140d |
| RHD4HOASZ2APPMV150 |  | Review and Approval of As-Built Drawings for Medium Voltage Network for MV-Z2-APP | 8d | 2028-09-02 | 2028-09-10 | RHD4HOASZ3APPMV150, RHD4HOASZ2SUBMV150 | -146d |
| RHD4HOASZ2APPEW100 |  | Review and Approval of As-Built Drawings for Road Plans and Profile for EW-Z2-APP | 9d | 2028-09-03 | 2028-09-12 | RHD4HOASZ3APPEW100, RHD4HOASZ2SUBEW100 | -147d |
| RHD4HOASZ2APPST110 |  | Review and Approval of As-Built Drawings for Storm Water Network for ST-Z2-APP | 12d | 2028-09-18 | 2028-10-02 | RHD4HOASZ3APPST110, RHD4HOASZ2SUBST110 | -146d |
| RHD4HOASZ2APPIRR140 |  | Review and Approval of As-Built Drawings for Irrigation Network for IRR-Z2-APP | 12d | 2028-09-20 | 2028-10-04 | RHD4HOASZ3APPIRR140, RHD4HOASZ2SUBIRR140 | -146d |
| RHD4HOASZ2APPPT130 |  | Review and Approval of As-Built Drawings for Potable Water Network for PT-Z2-APP | 12d | 2028-09-20 | 2028-10-04 | RHD4HOASZ3APPPT130, RHD4HOASZ2SUBPT130 | -146d |
| RHD4HOASZ2APPSL170 |  | Review and Approval of As-Built Drawings for Street Lighting Network for SL-Z2-APP | 15d | 2028-09-24 | 2028-10-10 | RHD4HOASZ3APPSL170, RHD4HOASZ3APPSL170 FF, RHD4HOASZ2SUBSL170 | -173d |
| RHD4HOASZ2APPSW120 |  | Review and Approval of As-Built Drawings for Sewage Network for SW-Z2-APP | 16d | 2028-09-26 | 2028-10-14 | RHD4HOASZ3APPSW120, RHD4HOASZ2SUBSW120 | -146d |
| RHD4HOASZ2APPCCTV210 |  | Review and Approval of As-Built Drawings for Security Network for CCTV-Z2-APP | 8d | 2028-10-11 | 2028-10-19 | RHD4HOASZ3APPCCTV210, RHD4HOASZ2SUBCCTV210 | -182d |
| RHD4HOASZ2APPRD220 |  | Review and Approval of As-Built Drawings for Road Works( KERBING AND PAVEMENT ) for RD-Z2-APP | 8d | 2028-11-13 | 2028-11-21 | RHD4HOASZ3APPRD220, RHD4HOASZ2SUBRD220 | -196d |
| RHD4HOASZ2APPICT200 |  | Review and Approval of As-Built Drawings for Information and Communication Technologies Network for ICT-Z2-APP | 8d | 2028-12-02 | 2028-12-10 | RHD4HOASZ3APPICT200, RHD4HOASZ2SUBICT200 | -197d |
|  | 9247 | **RHD4-02-002-As Built Drawing Approvals-Z3** |  | 2028-01-06 | 2028-11-30 |  |  |
| RHD4HOASZ3APPLV160 |  | Review and Approval of As-Built Drawings for Low Voltage Network for LV-Z3-APP | 8d | 2028-01-06 | 2028-01-15 | RHD4HOASZ4APPLV160, RHD4HOASZ3SUBLV160 | -183d |
| RHD4HOASZ3APPTC190 |  | Review and Approval of As-Built Drawings for Telecommunications Network for TC-Z3-APP | 6d | 2028-08-19 | 2028-08-24 | RHD4HOASZ4APPTC190, RHD4HOASZ3SUBTC190 | -140d |
| RHD4HOASZ3APPEW100 |  | Review and Approval of As-Built Drawings for Road Plans and Profile for EW-Z3-APP | 10d | 2028-08-22 | 2028-09-02 | RHD4HOASZ4APPEW100, RHD4HOASZ3SUBEW100 | -147d |

| ID | WBS | Task | Duration | Start | Finish | Predecessors | Total float |
| --- | --- | --- | --- | --- | --- | --- | --- |
| RHD4HOASZ3APPMV150 |  | Review and Approval of As-Built Drawings for Medium Voltage Network for MV-Z3-APP | 8d | 2028-08-23 | 2028-08-31 | RHD4HOASZ4APPMV150, RHD4HOASZ3SUBMV150 | -146d |
| RHD4HOASZ3APPSL170 |  | Review and Approval of As-Built Drawings for Street Lighting Network for SL-Z3-APP | 15d | 2028-08-27 | 2028-09-12 | RHD4HOASZ4APPSL170, RHD4HOASZ3SUBSL170 | -165d |
| RHD4HOASZ3APPST110 |  | Review and Approval of As-Built Drawings for Storm Water Network for ST-Z3-APP | 12d | 2028-09-04 | 2028-09-17 | RHD4HOASZ4APPST110, RHD4HOASZ3SUBST110 | -146d |
| RHD4HOASZ3APPIRR140 |  | Review and Approval of As-Built Drawings for Irrigation Network for IRR-Z3-APP | 12d | 2028-09-06 | 2028-09-19 | RHD4HOASZ4APPIRR140, RHD4HOASZ3SUBIRR140 | -146d |
| RHD4HOASZ3APPPT130 |  | Review and Approval of As-Built Drawings for Potable Water Network for PT-Z3-APP | 12d | 2028-09-06 | 2028-09-19 | RHD4HOASZ4APPPT130, RHD4HOASZ3SUBPT130 | -146d |
| RHD4HOASZ3APPSW120 |  | Review and Approval of As-Built Drawings for Sewage Network for SW-Z3-APP | 6d | 2028-09-18 | 2028-09-25 | RHD4HOASZ4APPSW120, RHD4HOASZ3SUBSW120 | -146d |
| RHD4HOASZ3APPCCTV210 |  | Review and Approval of As-Built Drawings for Security Network for CCTV-Z3-APP | 8d | 2028-10-02 | 2028-10-10 | RHD4HOASZ4APPCCTV210, RHD4HOASZ3SUBCCTV210 | -182d |
| RHD4HOASZ3APPRD220 |  | Review and Approval of As-Built Drawings for Road Works( KERBING AND PAVEMENT ) for RD-Z3-APP | 8d | 2028-11-04 | 2028-11-12 | RHD4HOASZ4APPRD220, RHD4HOASZ3SUBRD220 | -196d |
| RHD4HOASZ3APPICT200 |  | Review and Approval of As-Built Drawings for Information and Communication Technologies Network for ICT-Z3-APP | 14d | 2028-11-15 | 2028-11-30 | RHD4HOASZ4APPICT200, RHD4HOASZ3SUBICT200 | -197d |
|  | 9248 | **RHD4-02-002-As Built Drawing Approvals-Z4** |  | 2027-12-01 | 2028-09-17 |  |  |
| RHD4HOASZ4APPLV160 |  | Review and Approval of As-Built Drawings for Low Voltage Network for LV-Z4-APP | 8d | 2027-12-01 | 2027-12-11 | RHD4HOASZ6APPLV160, RHD4HOASZ4SUBLV160 | -160.02d |
| RHD4HOASZ4APPSL170 |  | Review and Approval of As-Built Drawings for Street Lighting Network for SL-Z4-APP | 15d | 2028-01-15 | 2028-02-01 | RHD4HOASZ6APPSL170, RHD4HOASZ4SUBSL170 | -183.02d |
| RHD4HOASZ4APPTC190 |  | Review and Approval of As-Built Drawings for Telecommunications Network for TC-Z4-APP | 16d | 2028-06-17 | 2028-07-04 | RHD4HOASZ4APPSL170, RHD4HOASZ6SUBTC190, RHD4HOASZ6APPTC190, RHD4HOASZ4SUBTC190 | -148d |
| RHD4HOASZ4APPEW100 |  | Review and Approval of As-Built Drawings for Road Plans and Profile for EW-Z4-APP | 10d | 2028-08-10 | 2028-08-21 | RHD4HOASZ6APPEW100, RHD4HOASZ4SUBEW100 | -147d |
| RHD4HOASZ4APPCCTV210 |  | Review and Approval of As-Built Drawings for Security Network for CCTV-Z4-APP | 8d | 2028-08-12 | 2028-08-20 | RHD4HOASZ6APPCCTV210, RHD4HOASZ4SUBCCTV210 | -147d |
| RHD4HOASZ4APPMV150 |  | Review and Approval of As-Built Drawings for Medium Voltage Network for MV-Z4-APP | 8d | 2028-08-14 | 2028-08-22 | RHD4HOASZ6APPMV150, RHD4HOASZ4SUBMV150 | -146d |
| RHD4HOASZ4APPST110 |  | Review and Approval of As-Built Drawings for Storm Water Network for ST-Z4-APP | 12d | 2028-08-21 | 2028-09-03 | RHD4HOASZ6APPST110, RHD4HOASZ4SUBST110 | -146d |
| RHD4HOASZ4APPIRR140 |  | Review and Approval of As-Built Drawings for Irrigation Network for IRR-Z4-APP | 12d | 2028-08-23 | 2028-09-05 | RHD4HOASZ6APPIRR140, RHD4HOASZ4SUBIRR140 | -146d |
| RHD4HOASZ4APPPT130 |  | Review and Approval of As-Built Drawings for Potable Water Network for PT-Z4-APP | 12d | 2028-08-23 | 2028-09-05 | RHD4HOASZ6APPPT130, RHD4HOASZ4SUBPT130 | -146d |
| RHD4HOASZ4APPICT200 |  | Review and Approval of As-Built Drawings for Information and Communication Technologies Network for ICT-Z4-APP | 16d | 2028-08-28 | 2028-09-14 | RHD4HOASZ6APPICT200, RHD4HOASZ4SUBICT200 | -146d |
| RHD4HOASZ4APPRD220 |  | Review and Approval of As-Built Drawings for Road Works( KERBING AND PAVEMENT ) for RD-Z4-APP | 8d | 2028-08-28 | 2028-09-05 | RHD4HOASZ6APPRD220, RHD4HOASZ4SUBRD220 | -147d |
| RHD4HOASZ4APPSW120 |  | Review and Approval of As-Built Drawings for Sewage Network for SW-Z4-APP | 12d | 2028-09-04 | 2028-09-17 | RHD4HOASZ6APPSW120, RHD4HOASZ4SUBSW120 | -146d |
|  | 9249 | **RHD4-02-002-As Built Drawing Approvals-Z5** |  | 2027-10-30 | 2028-08-17 |  |  |
| RHD4HOASZ5APPLV160 |  | Review and Approval of As-Built Drawings for Low Voltage Network for LV-Z5-APP | 8d | 2027-10-30 | 2027-11-08 | RHD4HOASZ5SUBLV160 | -148.02d |
| RHD4HOASZ5APPSL170 |  | Review and Approval of As-Built Drawings for Street Lighting Network for SL-Z5-APP | 15d | 2028-02-09 | 2028-03-02 | RHD4HOASZ5SUBSL170 | -124.02d |
| RHD4HOASZ5APPTC190 |  | Review and Approval of As-Built Drawings for Telecommunications Network for TC-Z5-APP | 15d | 2028-05-11 | 2028-05-28 | RHD4HOASZ5SUBTC190 | -148d |
| RHD4HOASZ5APPSW120 |  | Review and Approval of As-Built Drawings for Sewage Network for SW-Z5-APP | 12d | 2028-07-10 | 2028-07-23 | RHD4HOASZ5SUBSW120 | -164d |
| RHD4HOASZ5APPEW100 |  | Review and Approval of As-Built Drawings for Road Plans and Profile for EW-Z5-APP | 10d | 2028-07-18 | 2028-07-29 | RHD4HOASTUN1APP1000, RHD4HOASZ5SUBEW100 | -147d |
| RHD4HOASZ5APPICT200 |  | Review and Approval of As-Built Drawings for Information and Communication Technologies Network for ICT-Z5-APP | 16d | 2028-07-22 | 2028-08-08 | RHD4HOASZ5SUBICT200 | -146d |
| RHD4HOASZ5APPCCTV210 |  | Review and Approval of As-Built Drawings for Security Network for CCTV-Z5-APP | 8d | 2028-07-24 | 2028-08-01 | RHD4HOASZ5SUBCCTV210 | -147d |
| RHD4HOASZ5APPST110 |  | Review and Approval of As-Built Drawings for Storm Water Network for ST-Z5-APP | 12d | 2028-07-24 | 2028-08-06 | RHD4HOASZ5SUBST110 | -146d |
| RHD4HOASZ5APPIRR140 |  | Review and Approval of As-Built Drawings for Irrigation Network for IRR-Z5-APP | 12d | 2028-07-26 | 2028-08-08 | RHD4HOASZ5SUBIRR140 | -146d |
| RHD4HOASZ5APPMV150 |  | Review and Approval of As-Built Drawings for Medium Voltage Network for MV-Z5-APP | 8d | 2028-07-26 | 2028-08-03 | RHD4HOASZ5SUBMV150 | -146d |
| RHD4HOASZ5APPPT130 |  | Review and Approval of As-Built Drawings for Potable Water Network for PT-Z5-APP | 12d | 2028-07-26 | 2028-08-08 | RHD4HOASZ5SUBPT130 | -146d |
| RHD4HOASZ5APPRD220 |  | Review and Approval of As-Built Drawings for Road Works( KERBING AND PAVEMENT ) for RD-Z5-APP | 7d | 2028-08-10 | 2028-08-17 | RHD4HOASZ5SUBRD220 | -147d |
|  | 9250 | **RHD4-02-002-As Built Drawing Approvals-Z6** |  | 2027-11-22 | 2028-08-27 |  |  |
| RHD4HOASZ6APPLV160 |  | Review and Approval of As-Built Drawings for Low Voltage Network for LV-Z6-APP | 8d | 2027-11-22 | 2027-12-01 | RHD4HOASZ5APPLV160, RHD4HOASZ6SUBLV160 | -160.02d |
| RHD4HOASZ6APPSL170 |  | Review and Approval of As-Built Drawings for Street Lighting Network for SL-Z6-APP | 15d | 2027-12-28 | 2028-01-15 | RHD4HOASZ6SUBSL170 | -183.02d |
| RHD4HOASZ6APPTC190 |  | Review and Approval of As-Built Drawings for Telecommunications Network for TC-Z6-APP | 16d | 2028-05-29 | 2028-06-15 | RHD4HOASZ5APPTC190, RHD4HOASZ6SUBTC190 | -148d |
| RHD4HOASZ6APPSW120 |  | Review and Approval of As-Built Drawings for Sewage Network for SW-Z6-APP | 12d | 2028-07-26 | 2028-08-08 | RHD4HOASZ5APPSW120, RHD4HOASZ6SUBSW120 | -166d |
| RHD4HOASZ6APPEW100 |  | Review and Approval of As-Built Drawings for Road Plans and Profile for EW-Z6-APP | 10d | 2028-07-30 | 2028-08-09 | RHD4CZ6RA01RD9100, RHD4HOASZ5APPEW100, RHD4HOASZ6SUBEW100 | -147d |
| RHD4HOASZ6APPCCTV210 |  | Review and Approval of As-Built Drawings for Security Network for CCTV-Z6-APP | 8d | 2028-08-02 | 2028-08-10 | RHD4HOASZ5APPCCTV210, RHD4HOASZ6SUBCCTV210 | -147d |
| RHD4HOASZ6APPMV150 |  | Review and Approval of As-Built Drawings for Medium Voltage Network for MV-Z6-APP | 8d | 2028-08-05 | 2028-08-13 | RHD4HOASZ5APPMV150, RHD4HOASZ6SUBMV150 | -146d |
| RHD4HOASZ6APPST110 |  | Review and Approval of As-Built Drawings for Storm Water Network for ST-Z6-APP | 12d | 2028-08-07 | 2028-08-20 | RHD4CZ6A015ST4600, RHD4CZ6C052ST4600, RHD4HOASZ5APPST110, RHD4HOASZ6SUBST110 | -146d |
| RHD4HOASZ6APPICT200 |  | Review and Approval of As-Built Drawings for Information and Communication Technologies Network for ICT-Z6-APP | 16d | 2028-08-09 | 2028-08-27 | RHD4HOASZ5APPICT200, RHD4HOASZ6SUBICT200 | -146d |
| RHD4HOASZ6APPIRR140 |  | Review and Approval of As-Built Drawings for Irrigation Network for IRR-Z6-APP | 12d | 2028-08-09 | 2028-08-22 | RHD4HOASZ5APPIRR140, RHD4HOASZ6SUBIRR140 | -146d |
| RHD4HOASZ6APPPT130 |  | Review and Approval of As-Built Drawings for Potable Water Network for PT-Z6-APP | 12d | 2028-08-09 | 2028-08-22 | RHD4HOASZ5APPPT130, RHD4HOASZ6SUBPT130 | -146d |
| RHD4HOASZ6APPRD220 |  | Review and Approval of As-Built Drawings for Road Works( KERBING AND PAVEMENT ) for RD-Z6-APP | 8d | 2028-08-19 | 2028-08-27 | RHD4HOASZ5APPRD220, RHD4HOASZ6SUBRD220 | -147d |
|  | 9251 | **RHD4-02-002-As Built Drawing Approvals-Z7** |  | 2028-02-03 | 2028-12-28 |  |  |
| RHD4HOASZ7APPLV160 |  | Review and Approval of As-Built Drawings for Low Voltage Network for LV-Z7-APP | 8d | 2028-02-03 | 2028-02-12 | RHD4HOASZ6APPSL170, RHD4HOASZ1APPLV160, RHD4HOASZ7SUBLV160 | -126d |
| RHD4HOASZ7APPEW100 |  | Review and Approval of As-Built Drawings for Road Plans and Profile for EW-Z7-APP | 10d | 2028-09-24 | 2028-10-04 | RHD4HOASZ1APPEW100, RHD4HOASZ7SUBEW100 | -147d |
| RHD4HOASZ7APPMV150 |  | Review and Approval of As-Built Drawings for Medium Voltage Network for MV-Z7-APP | 16d | 2028-09-24 | 2028-10-11 | RHD4HOASZ1APPMV150, RHD4HOASZ7SUBMV150 | -146d |
| RHD4HOASZ7APPTC190 |  | Review and Approval of As-Built Drawings for Telecommunications Network for TC-Z7-APP | 15d | 2028-10-01 | 2028-10-17 | RHD4HOASZ1APPTC190, RHD4HOASZ7SUBTC190 | -149d |
| RHD4HOASZ7APPST110 |  | Review and Approval of As-Built Drawings for Storm Water Network for ST-Z7-APP | 12d | 2028-10-17 | 2028-10-30 | RHD4HOASZ1APPST110, RHD4HOASZ7SUBST110 | -146d |
| RHD4HOASZ7APPIRR140 |  | Review and Approval of As-Built Drawings for Irrigation Network for IRR-Z7-APP | 10d | 2028-10-19 | 2028-10-30 | RHD4HOASZ1APPIRR140, RHD4HOASZ7SUBIRR140 | -146d |
| RHD4HOASZ7APPPT130 |  | Review and Approval of As-Built Drawings for Potable Water Network for PT-Z7-APP | 10d | 2028-10-19 | 2028-10-30 | RHD4HOASZ1APPPT130, RHD4HOASZ7SUBPT130 | -146d |
| RHD4HOASZ7APPSW120 |  | Review and Approval of As-Built Drawings for Sewage Network for SW-Z7-APP | 8d | 2028-10-22 | 2028-10-30 | RHD4HOASZ1APPSW120, RHD4HOASZ7SUBSW120 | -146d |
| RHD4HOASZ7APPSL170 |  | Review and Approval of As-Built Drawings for Street Lighting Network for SL-Z7-APP | 15d | 2028-10-29 | 2028-11-14 | RHD4HOASZ1APPSL170, RHD4HOASZ7SUBSL170 | -173d |
| RHD4HOASZ7APPCCTV210 |  | Review and Approval of As-Built Drawings for Security Network for CCTV-Z7-APP | 16d | 2028-11-05 | 2028-11-22 | RHD4HOASZ1APPCCTV210, RHD4HOASZ7SUBCCTV210 | -182d |
| RHD4HOASZ7APPRD220 |  | Review and Approval of As-Built Drawings for Road Works( KERBING AND PAVEMENT ) for RD-Z7-APP | 6d | 2028-11-29 | 2028-12-05 | RHD4HOASZ1APPRD220, RHD4HOASZ7SUBRD220 | -196d |
| RHD4HOASZ7APPICT200 |  | Review and Approval of As-Built Drawings for Information and Communication Technologies Network for ICT-Z7-APP | 8d | 2028-12-20 | 2028-12-28 | RHD4HOASZ1APPICT200, RHD4HOASZ7SUBICT200 | -197d |
|  | 9252 | **RHD4-02-002-As Built Drawing Approvals-Z8** |  | 2028-02-13 | 2029-01-07 |  |  |
| RHD4HOASZ8APPLV160 |  | Review and Approval of As-Built Drawings for Low Voltage Network for LV-Z8-APP | 8d | 2028-02-13 | 2028-02-21 | RHD4HOASZ7APPLV160, RHD4HOASZ8SUBLV160 | -126d |
| RHD4HOASZ8APPMV150 |  | Review and Approval of As-Built Drawings for Medium Voltage Network for MV-Z8-APP | 16d | 2028-10-12 | 2028-10-30 | RHD4HOASZ7APPMV150, RHD4HOASZ8SUBMV150 | -146d |
| RHD4HOASZ8APPTC190 |  | Review and Approval of As-Built Drawings for Telecommunications Network for TC-Z8-APP | 15d | 2028-10-18 | 2028-11-04 | RHD4HOASZ7APPTC190, RHD4HOASZ7APPTC190 FF, RHD4HOASZ8SUBTC190 | -149d |
| RHD4HOASZ8APPIRR140 |  | Review and Approval of As-Built Drawings for Irrigation Network for IRR-Z8-APP | 8d | 2028-10-31 | 2028-11-08 | RHD4HOASZ7APPIRR140, RHD4HOASZ8SUBIRR140 | -146d |
| RHD4HOASZ8APPPT130 |  | Review and Approval of As-Built Drawings for Potable Water Network for PT-Z8-APP | 8d | 2028-10-31 | 2028-11-08 | RHD4HOASZ7APPPT130, RHD4HOASZ8SUBPT130 | -146d |
| RHD4HOASZ8APPST110 |  | Review and Approval of As-Built Drawings for Storm Water Network for ST-Z8-APP | 8d | 2028-10-31 | 2028-11-08 | RHD4HOASZ7APPST110, RHD4HOASZ8SUBST110 | -146d |
| RHD4HOASZ8APPSW120 |  | Review and Approval of As-Built Drawings for Sewage Network for SW-Z8-APP | 8d | 2028-10-31 | 2028-11-08 | RHD4HOASZ7APPSW120, RHD4HOASZ8SUBSW120 | -146d |
| RHD4HOASZ8APPSL170 |  | Review and Approval of As-Built Drawings for Street Lighting Network for SL-Z8-APP | 15d | 2028-11-15 | 2028-12-02 | RHD4HOASZ7APPSL170, RHD4HOASZ8SUBSL170 | -173d |

| ID | WBS | Task | Duration | Start | Finish | Predecessors | Total float |
| --- | --- | --- | --- | --- | --- | --- | --- |
| RHD4HOASZ8APPCCTV210 |  | Review and Approval of As-Built Drawings for Security Network for CCTV-Z8-APP | 16d | 2028-11-23 | 2028-12-11 | RHD4HOASZ7APPCCTV210, RHD4HOASZ8SUBCCTV210 | -182d |
| RHD4HOASZ8APPEW100 |  | Review and Approval of As-Built Drawings for Road Plans and Profile for EW-Z8-APP | 8d | 2028-12-04 | 2028-12-12 | RHD4HOASZ7APPEW100, RHD4HOASZ8SUBEW100 | -198d |
| RHD4HOASZ8APPRD220 |  | Review and Approval of As-Built Drawings for Road Works( KERBING AND PAVEMENT ) for RD-Z8-APP | 12d | 2028-12-06 | 2028-12-19 | RHD4HOASZ8SUBRD220, RHD4HOASZ7APPRD220 | -196d |
| RHD4HOASZ8APPICT200 |  | Review and Approval of As-Built Drawings for Information and Communication Technologies Network for ICT-Z8-APP | 8d | 2028-12-30 | 2029-01-07 | RHD4HOASZ7APPICT200, RHD4HOASZ8SUBICT200 | -197d |
|  | 9253 | **RHD4-02-002-As Built Drawing Approvals-Z9** |  | 2028-02-23 | 2029-01-16 |  |  |
| RHD4HOASZ9APPLV160 |  | Review and Approval of As-Built Drawings for Low Voltage Network for LV-Z9-APP | 8d | 2028-02-23 | 2028-03-06 | RHD4HOASZ8APPLV160, RHD4HOASZ9SUBLV160 | -126d |
| RHD4HOASZ9APPMV150 |  | Review and Approval of As-Built Drawings for Medium Voltage Network for MV-Z9-APP | 16d | 2028-10-31 | 2028-11-18 | RHD4HOASZ8APPMV150, RHD4HOASZ9SUBMV150 | -146d |
| RHD4HOASZ9APPTC190 |  | Review and Approval of As-Built Drawings for Telecommunications Network for TC-Z9-APP | 15d | 2028-11-05 | 2028-11-21 | RHD4HOASZ8APPTC190, RHD4HOASZ8APPTC190 FF, RHD4HOASZ9SUBTC190 | -149d |
| RHD4HOASZ9APPIRR140 |  | Review and Approval of As-Built Drawings for Irrigation Network for IRR-Z9-APP | 8d | 2028-11-09 | 2028-11-18 | RHD4HOASZ8APPIRR140, RHD4HOASZ9SUBIRR140 | -146d |
| RHD4HOASZ9APPPT130 |  | Review and Approval of As-Built Drawings for Potable Water Network for PT-Z9-APP | 8d | 2028-11-09 | 2028-11-18 | RHD4HOASZ8APPPT130, RHD4HOASZ9SUBPT130 | -146d |
| RHD4HOASZ9APPST110 |  | Review and Approval of As-Built Drawings for Storm Water Network for ST-Z9-APP | 8d | 2028-11-09 | 2028-11-18 | RHD4HOASZ8APPST110, RHD4HOASZ9SUBST110 | -146d |
| RHD4HOASZ9APPSW120 |  | Review and Approval of As-Built Drawings for Sewage Network for SW-Z9-APP | 8d | 2028-11-09 | 2028-11-18 | RHD4HOASZ8APPSW120, RHD4HOASZ9SUBSW120 | -146d |
| RHD4HOASZ9APPSL170 |  | Review and Approval of As-Built Drawings for Street Lighting Network for SL-Z9-APP | 15d | 2028-12-03 | 2028-12-19 | RHD4HOASZ8APPSL170, RHD4HOASZ9SUBSL170 | -173d |
| RHD4HOASZ9APPCCTV210 |  | Review and Approval of As-Built Drawings for Security Network for CCTV-Z9-APP | 16d | 2028-12-12 | 2028-12-30 | RHD4HOASZ8APPCCTV210, RHD4HOASZ9SUBCCTV210 | -182d |
| RHD4HOASZ9APPEW100 |  | Review and Approval of As-Built Drawings for Road Plans and Profile for EW-Z9-APP | 8d | 2028-12-13 | 2028-12-21 | RHD4HOASZ8APPEW100, RHD4HOASZ9SUBEW100 | -198d |
| RHD4HOASZ9APPRD220 |  | Review and Approval of As-Built Drawings for Road Works( KERBING AND PAVEMENT ) for RD-Z9-APP | 16d | 2028-12-20 | 2029-01-07 | RHD4HOASZ8APPRD220, RHD4HOASZ9SUBRD220 | -189d |
| RHD4HOASZ9APPICT200 |  | Review and Approval of As-Built Drawings for Information and Communication Technologies Network for ICT-Z9-APP | 8d | 2029-01-08 | 2029-01-16 | RHD4HOASZ8APPICT200, RHD4HOASZ9SUBICT200 | -197d |
|  | 9254 | **RHD4-02-002-As Built Drawing Approvals-Tunne 1 - TUN1** |  | 2028-05-11 | 2028-06-21 |  |  |
| RHD4HOASTUN1APP1000 |  | Review and Approval of As-Built Drawings for TUNNEL 1 (PLANS) -Z5 for -TUN1-APP | 12d | 2028-05-11 | 2028-05-24 | RHD4HOASZ9APPLV160, RHD4HOASTUN1SUB1000 | -179d |
| RHD4HOASTUN1APP1100 |  | Review and Approval of As-Built Drawings for TUNNEL 1 (SECTIONS) -Z5 for -TUN1-APP | 12d | 2028-05-25 | 2028-06-07 | RHD4HOASTUN1APP1000, RHD4HOASTUN1SUB1100 | -179d |
| RHD4HOASTUN1APP1200 |  | Review and Approval of As-Built Drawings for TUNNEL 1 (BBS) -Z5 for -TUN1-APP | 12d | 2028-06-08 | 2028-06-21 | RHD4HOASTUN1APP1100, RHD4HOASTUN1SUB1200 | -179d |
|  | 9256 | **RHD4-02-002-As Built Drawing Approvals-Sewage Lift Station 1 - SWL1** |  | 2028-04-24 | 2028-06-21 |  |  |
| RHD4HOASSWL1APP1000 |  | Review and Approval of As-Built Drawings for Sewage Lift Station 1 - Z3 - Structure Package for -SWL1-APP | 12d | 2028-04-24 | 2028-05-10 | RHD4HOASSWL1SUB1000 | -170d |
| RHD4HOASSWL1APP1100 |  | Review and Approval of As-Built Drawings for Sewage Lift Station 1 - Z3 - Architecture Package for -SWL1-APP | 12d | 2028-05-11 | 2028-05-24 | RHD4HOASSWL1APP1000, RHD4HOASSWL1SUB1100 | -170d |
| RHD4HOASSWL1APP1200 |  | Review and Approval of As-Built Drawings for Sewage Lift Station 1 - Z3 - Mechanical Package for -SWL1-APP | 12d | 2028-05-25 | 2028-06-07 | RHD4HOASSWL1APP1100, RHD4HOASSWL1SUB1200 | -170d |
| RHD4HOASSWL1APP1300 |  | Review and Approval of As-Built Drawings for Sewage Lift Station 1 - Z3 - Electrical Package for -SWL1-APP | 12d | 2028-06-08 | 2028-06-21 | RHD4HOASSWL1APP1200, RHD4GNCCTVZ7FT2000, RHD4GNCCTVZ8FT2000, RHD4CZ7L015RD6100, RHD4HOASSWL1SUB1300 | -170d |
|  | 9258 | **RHD4-02-002-As Built Drawing Approvals-Storm Lift Station 1 - STL1** |  | 2028-08-19 | 2028-10-16 |  |  |
| RHD4HOASSTL1APP1000 |  | Review and Approval of As-Built Drawings for Storm Lift Station 1 - Z5 - Structure Package for -STL1-APP | 5d | 2028-08-19 | 2028-08-23 | RHD4HOASSTL1SUB1000 | -179d |
| RHD4HOASSTL1APP1100 |  | Review and Approval of As-Built Drawings for Storm Lift Station 1 - Z5 - Architecture Package for -STL1-APP | 5d | 2028-09-30 | 2028-10-04 | RHD4HOASSTL1APP1000, RHD4HOASSTL1SUB1100 | -167d |
| RHD4HOASSTL1APP1200 |  | Review and Approval of As-Built Drawings for Storm Lift Station 1 - Z5 - Mechanical Package for -STL1-APP | 5d | 2028-10-05 | 2028-10-10 | RHD4HOASSTL1APP1100, RHD4HOASSTL1SUB1200 | -167d |
| RHD4HOASSTL1APP1300 |  | Review and Approval of As-Built Drawings for Storm Lift Station 1 - Z5 - Electrical Package for -STL1-APP | 5d | 2028-10-11 | 2028-10-16 | RHD4HOASSTL1APP1200, RHD4HOASSTL1SUB1300 | -167d |
|  | 9260 | **RHD4-02-002-Operational Spares - OS** |  | 2028-10-26 | 2028-11-01 |  |  |
| RHD4GNHOOS1214 |  | Supply Operational Spares - OS | 6d | 2028-10-26 | 2028-11-01 | RHD4GNHOFM1217 | -167d |
|  | 9261 | **RHD4-02-002-Warranties and Guarantees - WG** |  | 2028-11-02 | 2028-11-15 |  |  |
| RHD4GNHOWG1215 |  | Warranties and Guarantess - WG | 12d | 2028-11-02 | 2028-11-15 | RHD4GNHOOS1214 | -167d |
|  | 9262 | **RHD4-02-002-Training and Manuals** |  | 2028-10-17 | 2028-11-19 |  |  |
|  | 9263 | **RHD4-02-002-Training** |  | 2028-11-16 | 2028-11-19 |  |  |
| RHD4GNHOFM1216 |  | Training - FM | 3d | 2028-11-16 | 2028-11-19 | RHD4GNHOWG1215 | -167d |
|  | 9264 | **RHD4-02-002-Manuals** |  | 2028-10-17 | 2028-10-25 |  |  |
| RHD4GNHOFM1217 |  | Manuals - FM | 8d | 2028-10-17 | 2028-10-25 | RHD4HOASSTL1APP1300, RHD4HOASZ9SUBST110 | -167d |
|  | 9265 | **RHD4-02-002-Demobilization** |  | 2028-12-23 | 2029-01-17 |  |  |
|  | 9266 | **RHD4-02-002-Demobilization of Manpoer** |  | 2028-12-23 | 2028-12-26 |  |  |
| RHD4GNHODMOB1000 |  | Demobilize Manpower - DMOB | 4d | 2028-12-23 | 2028-12-26 | RHD4GNHOFM1217 SS, RHD4GNHOFM1216 SS, RHD4HOASZ2APPRD220, RHD4HOASZ2APPEW100, RHD4HOASZ2APPPT130, RHD4HOASZ2APPIRR140, RHD4HOASZ2APPICT200, RHD4HOASZ2APPSW120, RHD4HOASZ2APPST110, RHD4HOASZ1APPICT200, RHD4HOASZ1APPIRR140, RHD4HOASZ1APPPT130, RHD4HOASZ1APPEW100, RHD4HOASZ3APPRD220, RHD4HOASZ3APPEW100, RHD4HOASZ4APPRD220, RHD4HOASZ4APPEW100, RHD4HOASZ5APPEW100, RHD4HOASZ9APPEW100, RHD4HOASZ8APPRD220, RHD4HOASZ8APPEW100, RHD4HOASZ6SUBTC190 | -198d |
|  | 9267 | **RHD4-02-002-Removal of Euipment from the Site** |  | 2028-12-27 | 2028-12-31 |  |  |
| RHD4GNHODMOB1100 |  | Removal Equipments from The site - DMOB | 4d | 2028-12-27 | 2028-12-31 | RHD4GNHODMOB1000 | -198d |
|  | 9268 | **RHD4-02-002-Site Clean - up** |  | 2029-01-01 | 2029-01-06 |  |  |
| RHD4GNHODMOB1200 |  | Site Clean Up - DMOB | 5d | 2029-01-01 | 2029-01-06 | RHD4GNHODMOB1100, RHD4GNHOWG1215 | -198d |
|  | 9269 | **RHD4-02-002-Removal of Site Offices and Structure** |  | 2029-01-07 | 2029-01-10 |  |  |
| RHD4GNHODMOB1300 |  | Removal of Site Offices and Structures - DMOB | 4d | 2029-01-07 | 2029-01-10 | RHD4GNHODMOB1200 | -198d |
|  | 9270 | **RHD4-02-002-Restoration of Ground Surfaces** |  | 2029-01-11 | 2029-01-17 |  |  |
| RHD4GNHODMOB1400 |  | Restoration of Ground Surface - DMOB | 6d | 2029-01-11 | 2029-01-17 | RHD4GNHODMOB1300 | -198d |

## Version 4 (data date 2026-11-16, saved 2026-11-18, file RDH4-02-002- WPR 51 -16-11-2026.xer)

Last finish 2029-01-17 → 2029-01-14 (-3d). Complete tasks 1635 → 1722.

Changed:

| ID | Task | Start | Finish | Total float |
| --- | --- | --- | --- | --- |
| 3 | **RHD4-02-002-Milestones - MIS** |  | 2029-01-17 → 2029-01-14 (-3d) |  |
| 4 | **RHD4-02-002-Contractual Milestones** |  | 2029-01-17 → 2029-01-14 (-3d) |  |
| RHD4GNMRDMIS1200 | Submittal and Approval of Project Management Plan - MIS | 2026-11-23 → 2026-11-30 (+7d) | 2026-11-23 → 2026-11-30 (+7d) | 554d → 547d |
| RHD4GNENMIS1300 | Submittal and Approval of Shop Drawings and Material Approvals - MIS | 2026-12-07 → 2026-12-14 (+7d) | 2026-12-07 → 2026-12-14 (+7d) | 540d → 533d |
| RHD4GNPROMIS1400 | Completion of material Delivery - MIS - (PO Issuance) | 2026-12-23 → 2026-12-30 (+7d) | 2026-12-23 → 2026-12-30 (+7d) | 524d → 517d |
| RHD4GN10MMIS1500 | Roads Finish Milestone - MIS | 2027-04-21 → 2027-04-25 (+4d) | 2027-04-21 → 2027-04-25 (+4d) | 405d → 401d |
| RHD4GN10MMIS1510 | Medium Voltage Finish Milestone - MIS | 2027-11-04 → 2027-10-31 (-4d) | 2027-11-04 → 2027-10-31 (-4d) | 208d → 212d |
| RHD4GN18MMIS1600 | Deep Network Finish Milestone - MIS | 2027-11-24 → 2027-11-21 (-3d) | 2027-11-24 → 2027-11-21 (-3d) | 188.98d → 191d |
| RHD4GN24MMIS1700 | All Network Finish Milestone - MIS | 2028-06-29 → 2028-06-26 (-3d) | 2028-06-29 → 2028-06-26 (-3d) | -30d → -27d |
| RHD4GNPFMIS1800 | Project Finish - MIS | 2029-01-17 → 2029-01-14 (-3d) | 2029-01-17 → 2029-01-14 (-3d) | -232d → -229d |
| 9 | **RHD4-02-002-Preliminaries - PP** |  | 2026-11-23 → 2026-11-30 (+7d) |  |
| 16 | **RHD4-02-002-Logistic Plan-Site Mobilization Plan** | 2026-11-10 → 2026-11-17 (+7d) | 2026-11-14 → 2026-11-21 (+7d) |  |
| RHD4GNPPLOG1000 | Prepare & Submit Logistic Plan-Site Mobilization Plan - PP | 2026-11-10 → 2026-11-17 (+7d) | 2026-11-11 → 2026-11-18 (+7d) | -168.02d → -165d |
| RHD4GNPPLOG1100 | Review & approval Logistic Plan-Site Mobilization Plan - PP | 2026-11-12 → 2026-11-19 (+7d) | 2026-11-14 → 2026-11-21 (+7d) | -168.02d → -165d |
| 18 | **RHD4-02-002-Project management plans** |  | 2026-11-23 → 2026-11-30 (+7d) |  |
| RHD4GNPPPMP1100 | Review & approval Project management plans - PP | 2026-11-10 → 2026-11-17 (+7d) | 2026-11-23 → 2026-11-30 (+7d) | -176.02d → -173d |
| 20 | **RHD4-02-002-Engineering - EN** |  | 2026-12-07 → 2026-12-14 (+7d) |  |
| 83 | **RHD4-02-002-Method Statement - MS** |  | 2026-11-23 → 2026-11-30 (+7d) |  |
| 91 | **RHD4-02-002-Medium Voltage Cables - MV** | 2026-11-10 → 2026-11-17 (+7d) | 2026-11-23 → 2026-11-30 (+7d) |  |
| RHD4ENMSMV1000 | Prepare & Submit MS for Medium Voltage Cables - MV- MV | 2026-11-10 → 2026-11-17 (+7d) | 2026-11-16 → 2026-11-23 (+7d) | -189.02d → -186d |
| RHD4ENMSMV2000 | Review & approval MS for Medium Voltage Cables - MV- MV | 2026-11-17 → 2026-11-24 (+7d) | 2026-11-23 → 2026-11-30 (+7d) | -189.02d → -186d |
| 1 | **RHD4-02-002-MS Staging Time - STAG** |  | 2026-12-01 → 2026-12-08 (+7d) |  |
| 91 | **RHD4-02-002-Medium Voltage Cables - MV** | 2026-11-24 → 2026-12-01 (+7d) | 2026-12-01 → 2026-12-08 (+7d) |  |
| RHD4ENMSMV2010 | Staging Time for MS for Medium Voltage Cables - MV- MV | 2026-11-24 → 2026-12-01 (+7d) | 2026-12-01 → 2026-12-08 (+7d) | -189.02d → -186d |
| 21 | **RHD4-02-002-Shop Drawings - SD** |  | 2026-11-30 → 2026-12-07 (+7d) |  |
| 22 | **RHD4-02-002-Shop Drawing Submittals - SUB** |  | 2026-11-16 → 2026-11-23 (+7d) |  |
| 23 | **RHD4-02-002-Shop Drawing Submittals - SUB-Z1** |  | 2026-11-16 → 2026-11-23 (+7d) |  |
| RHD4ENSDZ1SUBMV150 | Prepare and Submit Shop Drawings for Medium Voltage Network for MV-Z1-SUB | 2026-11-10 → 2026-11-17 (+7d) | 2026-11-16 → 2026-11-23 (+7d) | -182.02d → -179d |
| 24 | **RHD4-02-002-Shop Drawing Submittals - SUB-Z2** |  | 2026-11-16 → 2026-11-23 (+7d) |  |
| RHD4ENSDZ2SUBMV150 | Prepare and Submit Shop Drawings for Medium Voltage Network for SUB-SD-Z2 | 2026-11-10 → 2026-11-17 (+7d) | 2026-11-16 → 2026-11-23 (+7d) | -182.02d → -179d |
| 25 | **RHD4-02-002-Shop Drawing Submittals - SUB-Z3** |  | 2026-11-16 → 2026-11-23 (+7d) |  |
| RHD4ENSDZ3SUBMV150 | Prepare and Submit Shop Drawings for Medium Voltage Network for SUB-SD-Z3 | 2026-11-10 → 2026-11-17 (+7d) | 2026-11-16 → 2026-11-23 (+7d) | -182.02d → -179d |
| 26 | **RHD4-02-002-Shop Drawing Submittals - SUB-Z4** |  | 2026-11-16 → 2026-11-23 (+7d) |  |
| RHD4ENSDZ4SUBMV150 | Prepare and Submit Shop Drawings for Medium Voltage Network for SUB-SD-Z4 | 2026-11-10 → 2026-11-17 (+7d) | 2026-11-16 → 2026-11-23 (+7d) | -182.02d → -179d |
| 27 | **RHD4-02-002-Shop Drawing Submittals - SUB-Z5** |  | 2026-11-16 → 2026-11-23 (+7d) |  |
| RHD4ENSDZ5SUBMV150 | Prepare and Submit Shop Drawings for Medium Voltage Network for SUB-SD-Z5 | 2026-11-10 → 2026-11-17 (+7d) | 2026-11-16 → 2026-11-23 (+7d) | -188.02d → -185d |
| 28 | **RHD4-02-002-Shop Drawing Submittals - SUB-Z6** |  | 2026-11-16 → 2026-11-23 (+7d) |  |
| RHD4ENSDZ6SUBMV150 | Prepare and Submit Shop Drawings for Medium Voltage Network for SUB-SD-Z6 | 2026-11-10 → 2026-11-17 (+7d) | 2026-11-16 → 2026-11-23 (+7d) | -182.02d → -179d |
| 29 | **RHD4-02-002-Shop Drawing Submittals - SUB-Z7** |  | 2026-11-16 → 2026-11-23 (+7d) |  |
| RHD4ENSDZ7SUBMV150 | Prepare and Submit Shop Drawings for Medium Voltage Network for SUB-SD-Z7 | 2026-11-10 → 2026-11-17 (+7d) | 2026-11-16 → 2026-11-23 (+7d) | -182.02d → -179d |
| 30 | **RHD4-02-002-Shop Drawing Submittals - SUB-Z8** |  | 2026-11-16 → 2026-11-23 (+7d) |  |
| RHD4ENSDZ8SUBMV150 | Prepare and Submit Shop Drawings for Medium Voltage Network for SUB-SD-Z8 | 2026-11-10 → 2026-11-17 (+7d) | 2026-11-16 → 2026-11-23 (+7d) | -182.02d → -179d |
| 31 | **RHD4-02-002-Shop Drawing Submittals - SUB-Z9** |  | 2026-11-16 → 2026-11-23 (+7d) |  |
| RHD4ENSDZ9SUBMV150 | Prepare and Submit Shop Drawings for Medium Voltage Network for SUB-SD-Z9 | 2026-11-10 → 2026-11-17 (+7d) | 2026-11-16 → 2026-11-23 (+7d) | -182.02d → -179d |
| 38 | **RHD4-02-002-Shop Drawing Approvals - APP** |  | 2026-11-30 → 2026-12-07 (+7d) |  |
| 39 | **RHD4-02-002-Shop Drawing Approvals - APP-Z1** |  | 2026-11-23 → 2026-11-30 (+7d) |  |
| RHD4ENSDZ1APPMV150 | Review and Approval of Shop Drawings for Medium Voltage Network for MV-Z1-APP | 2026-11-17 → 2026-11-24 (+7d) | 2026-11-23 → 2026-11-30 (+7d) | -182.02d → -179d |
| 40 | **RHD4-02-002-Shop Drawing Approvals - APP-Z2** |  | 2026-11-23 → 2026-11-30 (+7d) |  |
| RHD4ENSDZ2APPMV150 | Review and Approval of Shop Drawings for Medium Voltage Network for MV-Z2-APP | 2026-11-17 → 2026-11-24 (+7d) | 2026-11-23 → 2026-11-30 (+7d) | -182.02d → -179d |
| 41 | **RHD4-02-002-Shop Drawing Approvals - APP-Z3** |  | 2026-11-23 → 2026-11-30 (+7d) |  |
| RHD4ENSDZ3APPMV150 | Review and Approval of Shop Drawings for Medium Voltage Network for MV-Z3-APP | 2026-11-17 → 2026-11-24 (+7d) | 2026-11-23 → 2026-11-30 (+7d) | -182.02d → -179d |
| 42 | **RHD4-02-002-Shop Drawing Approvals - APP-Z4** |  | 2026-11-23 → 2026-11-30 (+7d) |  |
| RHD4ENSDZ4APPMV150 | Review and Approval of Shop Drawings for Medium Voltage Network for MV-Z4-APP | 2026-11-17 → 2026-11-24 (+7d) | 2026-11-23 → 2026-11-30 (+7d) | -182.02d → -179d |
| 43 | **RHD4-02-002-Shop Drawing Approvals - APP-Z5** |  | 2026-11-23 → 2026-11-30 (+7d) |  |
| RHD4ENSDZ5APPMV150 | Review and Approval of Shop Drawings for Medium Voltage Network for MV-Z5-APP | 2026-11-17 → 2026-11-24 (+7d) | 2026-11-23 → 2026-11-30 (+7d) | -188.02d → -185d |
| 44 | **RHD4-02-002-Shop Drawing Approvals - APP-Z6** |  | 2026-11-23 → 2026-11-30 (+7d) |  |
| RHD4ENSDZ6APPMV150 | Review and Approval of Shop Drawings for Medium Voltage Network for MV-Z6-APP | 2026-11-17 → 2026-11-24 (+7d) | 2026-11-23 → 2026-11-30 (+7d) | -182.02d → -179d |
| 45 | **RHD4-02-002-Shop Drawing Approvals - APP-Z7** |  | 2026-11-23 → 2026-11-30 (+7d) |  |
| RHD4ENSDZ7APPMV150 | Review and Approval of Shop Drawings for Medium Voltage Network for MV-Z7-APP | 2026-11-17 → 2026-11-24 (+7d) | 2026-11-23 → 2026-11-30 (+7d) | -182.02d → -179d |
| 46 | **RHD4-02-002-Shop Drawing Approvals - APP-Z8** |  | 2026-11-30 → 2026-12-07 (+7d) |  |
| RHD4ENSDZ8APPMV150 | Review and Approval of Shop Drawings for Medium Voltage Network for MV-Z8-APP | 2026-11-24 → 2026-12-01 (+7d) | 2026-11-30 → 2026-12-07 (+7d) | -188.02d → -185d |
| 47 | **RHD4-02-002-Shop Drawing Approvals - APP-Z9** |  | 2026-11-23 → 2026-11-30 (+7d) |  |
| RHD4ENSDZ9APPMV150 | Review and Approval of Shop Drawings for Medium Voltage Network for MV-Z9-APP | 2026-11-17 → 2026-11-24 (+7d) | 2026-11-23 → 2026-11-30 (+7d) | -182.02d → -179d |
| 54 | **RHD4-02-002-Prequalification and Material - MAR** |  | 2026-12-07 → 2026-12-14 (+7d) |  |
| 55 | **RHD4-02-002-Submittals of Material and Prequalifications - SUB** |  | 2026-11-30 → 2026-12-07 (+7d) |  |
| 60 | **RHD4-02-002-Submittals of Material and Prequalifications - SUB-Medium Voltage - MV** |  | 2026-11-23 → 2026-11-30 (+7d) |  |
| RHD4ENMARSUBMV600 | Prepare Material Submittal for Unit Substations - MAR-MV | 2026-11-10 → 2026-11-17 (+7d) | 2026-11-16 → 2026-11-23 (+7d) | -192d → -188d |
| RHD4ENMARSUBMV700 | Prepare Material Submittal for Ring Main Unit (RMU) - MAR-MV | 2026-11-10 → 2026-11-17 (+7d) | 2026-11-16 → 2026-11-23 (+7d) | -192d → -188d |
| RHD4ENMARSUBMV200 | Prepare Material Submittal for Medium Voltage Cable 3Cx500 mm2 - MAR-MV | 2026-11-17 → 2026-11-24 (+7d) | 2026-11-23 → 2026-11-30 (+7d) | -192d → -188d |
| RHD4ENMARSUBMV300 | Prepare Material Submittal for Medium Voltage Cable 3Cx50 mm2 - MAR-MV | 2026-11-17 → 2026-11-24 (+7d) | 2026-11-23 → 2026-11-30 (+7d) | -192d → -188d |

| ID | Task | Start | Finish | Total float |
| --- | --- | --- | --- | --- |
| RHD4ENMARSUBMV400 | Prepare Material Submittal for Straight Joints 3Cx50 mm2 - MAR-MV | 2026-11-17 → 2026-11-24 (+7d) | 2026-11-23 → 2026-11-30 (+7d) | -192d → -188d |
| RHD4ENMARSUBMV500 | Prepare Material Submittal for Normally Open Points (Outdoor type) - MAR-MV | 2026-11-17 → 2026-11-24 (+7d) | 2026-11-23 → 2026-11-30 (+7d) | -192d → -188d |
| 61 | **RHD4-02-002-Submittals of Material and Prequalifications - SUB-Low Voltage - LV** |  | 2026-11-16 → 2026-11-23 (+7d) |  |
| RHD4ENMARSUBLV300 | Prepare Material Submittal for Distribution Pillars - MAR-LV | 2026-11-10 → 2026-11-17 (+7d) | 2026-11-16 → 2026-11-23 (+7d) | -186d → -182d |
| RHD4ENMARSUBLV400 | Prepare Material Submittal for KWH Meter mounting Frame - MAR-LV | 2026-11-10 → 2026-11-17 (+7d) | 2026-11-16 → 2026-11-23 (+7d) | -186d → -182d |
| RHD4ENMARSUBLV500 | Prepare Material Submittal for Low Voltage Drawpit - MAR-LV | 2026-11-10 → 2026-11-17 (+7d) | 2026-11-16 → 2026-11-23 (+7d) | -176d → -172d |
| RHD4ENMARSUBLV600 | Prepare Material Submittal for Earthing for Pillars and Panels - MAR-LV | 2026-11-10 → 2026-11-17 (+7d) | 2026-11-16 → 2026-11-23 (+7d) | -182.02d → -179d |
| 66 | **RHD4-02-002-Submittals of Material and Prequalifications - SUB-Security Network - CCTV** |  | 2026-11-30 → 2026-12-07 (+7d) |  |
| RHD4ENMARSUBCCTV300 | Prepare Material Submittal for CCTV Panels and Panel's Components - MAR-CCTV | 2026-11-10 → 2026-11-17 (+7d) | 2026-11-16 → 2026-11-23 (+7d) | -194.02d → -191d |
| RHD4ENMARSUBCCTV400 | Prepare Material Submittal for CCTV Fiber Optic Cables - MAR-CCTV | 2026-11-17 → 2026-11-24 (+7d) | 2026-11-23 → 2026-11-30 (+7d) | -194.02d → -191d |
| RHD4ENMARSUBCCTV200 | Prepare Material Submittal for CCTV Network Cameras - MAR-CCTV | 2026-11-24 → 2026-12-01 (+7d) | 2026-11-30 → 2026-12-07 (+7d) | -194.02d → -191d |
| RHD4ENMARSUBCCTV500 | Prepare Material Submittal for CCTV Control Room Components - MAR-CCTV | 2026-11-24 → 2026-12-01 (+7d) | 2026-11-30 → 2026-12-07 (+7d) | -98d → -104d |
| 68 | **RHD4-02-002-Submittals of Material and Prequalifications - SUB-Lift Stations - LFS** |  | 2026-11-23 → 2026-11-30 (+7d) |  |
| RHD4ENMARSUBLFS100 | Prepare Material Submittal for Metal Ladder and checkered Plate - MAR-LFS | 2026-11-10 → 2026-11-17 (+7d) | 2026-11-16 → 2026-11-23 (+7d) | -182.02d → -179d |
| RHD4ENMARSUBLFS1900 | Prepare Material Submittal for wall mounted Split/AC - MAR-LFS | 2026-11-10 → 2026-11-17 (+7d) | 2026-11-16 → 2026-11-23 (+7d) | -186d → -182d |
| RHD4ENMARSUBLFS2700 | Prepare Material Submittal for Enclosed Switches and Circuit Breakers - MAR-LFS | 2026-11-10 → 2026-11-17 (+7d) | 2026-11-16 → 2026-11-23 (+7d) | -192d → -188d |
| RHD4ENMARSUBLFS500 | Prepare Material Submittal for Metal Doors and Access Doors and Frames - MAR-LFS | 2026-11-10 → 2026-11-17 (+7d) | 2026-11-16 → 2026-11-23 (+7d) | -192d → -188d |
| RHD4ENMARSUBLFS2200 | Prepare Material Submittal for Earthing for Lift Stations - MAR-LFS | 2026-11-17 → 2026-11-24 (+7d) | 2026-11-23 → 2026-11-30 (+7d) | -192d → -188d |
| RHD4ENMARSUBLFS600 | Prepare Material Submittal for Painting - MAR-LFS | 2026-11-17 → 2026-11-24 (+7d) | 2026-11-23 → 2026-11-30 (+7d) | -192d → -188d |
| 69 | **RHD4-02-002-Approval of Material and Prequalifications - APP** |  | 2026-12-07 → 2026-12-14 (+7d) |  |
| 70 | **RHD4-02-002-Approval of Material and Prequalifications - APP-Storm Network - ST** |  | 2026-11-16 → 2026-11-23 (+7d) |  |
| RHD4ENMARAPPST500 | Approval of Material Submittal for Grouted Riprap - MAR-ST | 2026-11-10 → 2026-11-17 (+7d) | 2026-11-16 → 2026-11-23 (+7d) | -170.02d → -167d |
| 72 | **RHD4-02-002-Approval of Material and Prequalifications - APP-Potable Water Network - PT** |  | 2026-11-16 → 2026-11-23 (+7d) |  |
| RHD4ENMARAPPPT600 | Approval of Material Submittal for Metal Works (Chamber's Covers) - MAR-PT | 2026-11-10 → 2026-11-17 (+7d) | 2026-11-16 → 2026-11-23 (+7d) | -175.02d → -173d |
| 73 | **RHD4-02-002-Approval of Material and Prequalifications - APP-Irrigation Network - IRR** |  | 2026-11-16 → 2026-11-23 (+7d) |  |
| RHD4ENMARAPPIRR500 | Approval of Material Submittal for Metal Works (Chamber's Covers) - MAR-IRR | 2026-11-10 → 2026-11-17 (+7d) | 2026-11-16 → 2026-11-23 (+7d) | -175.02d → -173d |
| 74 | **RHD4-02-002-Approval of Material and Prequalifications - APP-Medium Voltage - MV** |  | 2026-11-30 → 2026-12-07 (+7d) |  |
| RHD4ENMARAPPMV600 | Approval of Material Submittal for Unit Substations - MAR-MV | 2026-11-17 → 2026-11-24 (+7d) | 2026-11-23 → 2026-11-30 (+7d) | -85d → -91d |
| RHD4ENMARAPPMV700 | Approval of Material Submittal for Ring Main Unit (RMU) - MAR-MV | 2026-11-17 → 2026-11-24 (+7d) | 2026-11-23 → 2026-11-30 (+7d) | -85d → -91d |
| RHD4ENMARAPPMV200 | Approval of Material Submittal for Medium Voltage Cable 3Cx500 mm2 - MAR-MV | 2026-11-24 → 2026-12-01 (+7d) | 2026-11-30 → 2026-12-07 (+7d) | -192d → -188d |
| RHD4ENMARAPPMV300 | Approval of Material Submittal for Medium Voltage Cable 3Cx50 mm2 - MAR-MV | 2026-11-24 → 2026-12-01 (+7d) | 2026-11-30 → 2026-12-07 (+7d) | -192d → -188d |
| RHD4ENMARAPPMV400 | Approval of Material Submittal for Straight Joints 3Cx50 mm2 - MAR-MV | 2026-11-24 → 2026-12-01 (+7d) | 2026-11-30 → 2026-12-07 (+7d) | -192d → -188d |
| RHD4ENMARAPPMV500 | Approval of Material Submittal for Normally Open Points (Outdoor type) - MAR-MV | 2026-11-24 → 2026-12-01 (+7d) | 2026-11-30 → 2026-12-07 (+7d) | -192d → -188d |
| 75 | **RHD4-02-002-Approval of Material and Prequalifications - APP-Low Voltage - LV** |  | 2026-11-23 → 2026-11-30 (+7d) |  |
| RHD4ENMARAPPLV300 | Approval of Material Submittal for Distribution Pillars - MAR-LV | 2026-11-17 → 2026-11-24 (+7d) | 2026-11-23 → 2026-11-30 (+7d) | -186d → -182d |
| RHD4ENMARAPPLV400 | Approval of Material Submittal for KWH Meter mounting Frame - MAR-LV | 2026-11-17 → 2026-11-24 (+7d) | 2026-11-23 → 2026-11-30 (+7d) | -186d → -182d |
| RHD4ENMARAPPLV500 | Approval of Material Submittal for Low Voltage Drawpit - MAR-LV | 2026-11-17 → 2026-11-24 (+7d) | 2026-11-23 → 2026-11-30 (+7d) | -176d → -172d |
| RHD4ENMARAPPLV600 | Approval of Material Submittal for Earthing for Pillars and Panels - MAR-LV | 2026-11-17 → 2026-11-24 (+7d) | 2026-11-23 → 2026-11-30 (+7d) | -182.02d → -179d |
| 80 | **RHD4-02-002-Approval of Material and Prequalifications - APP-Security Network - CCTV** | 2026-11-10 → 2026-11-17 (+7d) | 2026-12-07 → 2026-12-14 (+7d) |  |
| RHD4ENMARAPPCCTV100 | Approval of Material Submittal for CCTV Network Poles - MAR-CCTV | 2026-11-10 → 2026-11-17 (+7d) | 2026-11-16 → 2026-11-23 (+7d) | -194.02d → -191d |
| RHD4ENMARAPPCCTV300 | Approval of Material Submittal for CCTV Panels and Panel's Components - MAR-CCTV | 2026-11-17 → 2026-11-24 (+7d) | 2026-11-23 → 2026-11-30 (+7d) | -194.02d → -191d |
| RHD4ENMARAPPCCTV400 | Approval of Material Submittal for CCTV Fiber Optic Cables - MAR-CCTV | 2026-11-24 → 2026-12-01 (+7d) | 2026-11-30 → 2026-12-07 (+7d) | -194.02d → -191d |
| RHD4ENMARAPPCCTV200 | Approval of Material Submittal for CCTV Network Cameras - MAR-CCTV | 2026-12-01 → 2026-12-08 (+7d) | 2026-12-07 → 2026-12-14 (+7d) | -194.02d → -191d |
| RHD4ENMARAPPCCTV500 | Approval of Material Submittal for CCTV Control Room Components - MAR-CCTV | 2026-12-01 → 2026-12-08 (+7d) | 2026-12-07 → 2026-12-14 (+7d) | -98d → -104d |
| 81 | **RHD4-02-002-Approval of Material and Prequalifications - APP-Road Works - RD** |  | 2026-11-16 → 2026-11-23 (+7d) |  |
| RHD4ENMARAPPRD500 | Approval of Material Submittal for Wheel Stopper - MAR-RD | 2026-11-10 → 2026-11-17 (+7d) | 2026-11-16 → 2026-11-23 (+7d) | -182.02d → -179d |
| 82 | **RHD4-02-002-Approval of Material and Prequalifications - APP-Lift Stations - LFS** |  | 2026-11-30 → 2026-12-07 (+7d) |  |
| RHD4ENMARAPPLFS2600 | Approval of Material Submittal for Wiring Devices - MAR-LFS | 2026-11-10 → 2026-11-17 (+7d) | 2026-11-16 → 2026-11-23 (+7d) | -180d → -176d |
| RHD4ENMARAPPLFS2800_R | Approval of Material Submittal for Programmable Logic Controllers and Instrumentation for Process Systems - MAR-LFS(Rema | 2026-11-10 → 2026-11-17 (+7d) | 2026-11-16 → 2026-11-23 (+7d) | -70d → -76d |
| RHD4ENMARAPPLFS100 | Approval of Material Submittal for Metal Ladder and checkered Plate - MAR-LFS | 2026-11-17 → 2026-11-24 (+7d) | 2026-11-23 → 2026-11-30 (+7d) | -182.02d → -179d |
| RHD4ENMARAPPLFS1900 | Approval of Material Submittal for wall mounted Split/AC - MAR-LFS | 2026-11-17 → 2026-11-24 (+7d) | 2026-11-23 → 2026-11-30 (+7d) | -186d → -182d |
| RHD4ENMARAPPLFS2700 | Approval of Material Submittal for Enclosed Switches and Circuit Breakers - MAR-LFS | 2026-11-17 → 2026-11-24 (+7d) | 2026-11-23 → 2026-11-30 (+7d) | -192d → -188d |
| RHD4ENMARAPPLFS500 | Approval of Material Submittal for Metal Doors and Access Doors and Frames - MAR-LFS | 2026-11-17 → 2026-11-24 (+7d) | 2026-11-23 → 2026-11-30 (+7d) | -186d → -182d |
| RHD4ENMARAPPLFS2200 | Approval of Material Submittal for Earthing for Lift Stations - MAR-LFS | 2026-11-24 → 2026-12-01 (+7d) | 2026-11-30 → 2026-12-07 (+7d) | -192d → -188d |
| RHD4ENMARAPPLFS600 | Approval of Material Submittal for Painting - MAR-LFS | 2026-11-24 → 2026-12-01 (+7d) | 2026-11-30 → 2026-12-07 (+7d) | -192d → -188d |
| 97 | **RHD4-02-002-Procurement - PR** |  | 2027-04-28 → 2027-05-05 (+7d) |  |
| 127 | **RHD4-02-002-Long Lead Items -LOL** |  | 2027-04-28 → 2027-05-05 (+7d) |  |
| 128 | **RHD4-02-002-Long Lead Items - LOL-Material Purchase Order - PO** |  | 2026-12-23 → 2026-12-30 (+7d) |  |
| 104 | **RHD4-02-002-LOL-Material Purchase Order - PO-Medium Voltage - MV** | 2026-11-24 → 2026-12-01 (+7d) | 2026-12-09 → 2026-12-16 (+7d) |  |
| RHD4PRLOLPOMV1500 | Material Purchase Order for Unit Substations - LOL-MV | 2026-11-24 → 2026-12-01 (+7d) | 2026-12-09 → 2026-12-16 (+7d) | -85d → -91d |
| RHD4PRLOLPOMV1600 | Material Purchase Order for Ring Main Unit (RMU) - LOL-MV | 2026-11-24 → 2026-12-01 (+7d) | 2026-12-09 → 2026-12-16 (+7d) | -85d → -91d |
| 129 | **RHD4-02-002-LOL-Material Purchase Order - PO-Security Network - CCTV** | 2026-12-08 → 2026-12-15 (+7d) | 2026-12-23 → 2026-12-30 (+7d) |  |
| RHD4PRLOLPOCCTV1000 | Material Purchase Order for CCTV Control Room Components - LOL-CCTV | 2026-12-08 → 2026-12-15 (+7d) | 2026-12-23 → 2026-12-30 (+7d) | -98d → -104d |
| 130 | **RHD4-02-002-LOL-Material Purchase Order - PO-Lift Stations - LFS** |  | 2026-12-02 → 2026-12-09 (+7d) |  |
| RHD4PRLOLPOLFS1100 | Material Purchase Order for Magnetic type flowmeter - LOL-PO | 2026-11-10 → 2026-11-17 (+7d) | 2026-11-25 → 2026-12-02 (+7d) | -28d → -34d |
| RHD4PRLOLPOLFS1700 | Material Purchase Order for Programmable Logic Controllers and Instrumentation for Process Systems - LOL-LFS | 2026-11-17 → 2026-11-24 (+7d) | 2026-12-02 → 2026-12-09 (+7d) | -70d → -76d |
| 131 | **RHD4-02-002-Long Lead Items - LOL-Manufacturing - MAF** | 2026-11-10 → 2026-11-17 (+7d) | 2027-04-08 → 2027-04-15 (+7d) |  |
| 1 | **RHD4-02-002-LOL-Manufacturing - MAF-Medium Voltage Network - MV** | 2026-12-10 → 2026-12-17 (+7d) | 2027-04-08 → 2027-04-15 (+7d) |  |
| RHD4PRLOLMAFMV1500 | Material Fabrication for Unit Substations - LOL-MV | 2026-12-10 → 2026-12-17 (+7d) | 2027-04-08 → 2027-04-15 (+7d) | -100d → -107d |
| RHD4PRLOLMAFMV1600 | Material Fabrication for Ring Main Unit (RMU) - LOL-MV | 2026-12-10 → 2026-12-17 (+7d) | 2027-04-08 → 2027-04-15 (+7d) | -100d → -107d |

| ID | Task | Start | Finish | Total float |
| --- | --- | --- | --- | --- |
| 132 | **RHD4-02-002-LOL-Manufacturing - MAF-Security Network - CCTV** | 2026-12-24 → 2026-12-31 (+7d) | 2027-03-23 → 2027-03-30 (+7d) |  |
| RHD4PRLOLMAFCCTV1000 | Material Fabrication for CCTV Control Room Components - LOL-MAF | 2026-12-24 → 2026-12-31 (+7d) | 2027-03-23 → 2027-03-30 (+7d) | -115d → -122d |
| 133 | **RHD4-02-002-LOL-Manufacturing - MAF-Lift Stations - LFS** | 2026-11-10 → 2026-11-17 (+7d) | 2027-04-01 → 2027-04-08 (+7d) |  |
| RHD4PRLOLMAFLFS1000 | Material Fabrication for Screening Container - LOL-MAF | 2026-11-10 → 2026-11-17 (+7d) | 2027-03-09 → 2027-03-16 (+7d) | -44d → -51d |
| RHD4PRLOLMAFLFS1200 | Material Fabrication for Magnetic type flowmeter - LOL-MAF | 2026-11-10 → 2026-11-17 (+7d) | 2027-03-09 → 2027-03-16 (+7d) | -68d → -75d |
| RHD4PRLOLMAFLFS1300 | Material Fabrication for Surge Tank - LOL-MAF | 2026-11-10 → 2026-11-17 (+7d) | 2027-03-09 → 2027-03-16 (+7d) | -68d → -75d |
| RHD4PRLOLMAFLFS1400 | Material Fabrication for Odours scrubbing system - LOL-MAF | 2026-11-10 → 2026-11-17 (+7d) | 2027-03-09 → 2027-03-16 (+7d) | -68d → -75d |
| RHD4PRLOLMAFLFS1500 | Material Fabrication for JIB Crane - LOL-MAF | 2026-11-10 → 2026-11-17 (+7d) | 2027-03-09 → 2027-03-16 (+7d) | -54d → -61d |
| RHD4PRLOLMAFLFS1600 | Material Fabrication for Standby Diesel Generator - LOL-MAF | 2026-11-10 → 2026-11-17 (+7d) | 2027-03-09 → 2027-03-16 (+7d) | -62d → -69d |
| RHD4PRLOLMAFLFS2000 | Material Fabrication for Isolation Penstock - LOL-DOS | 2026-11-10 → 2026-11-17 (+7d) | 2027-03-09 → 2027-03-16 (+7d) | -62d → -69d |
| RHD4PRLOLMAFLFS1100 | Material Fabrication for Submersible pumps - LOL-MAF | 2026-11-26 → 2026-12-03 (+7d) | 2027-03-25 → 2027-04-01 (+7d) | -32d → -39d |
| RHD4PRLOLMAFLFS1700 | Material Fabrication for Programmable Logic Controllers and Instrumentation for Process Systems - LOL-MAF | 2026-12-03 → 2026-12-10 (+7d) | 2027-04-01 → 2027-04-08 (+7d) | -83d → -90d |
| 134 | **RHD4-02-002-Long Lead Items - LOL-Material Delivery on Site - DOS** | 2027-03-10 → 2027-03-17 (+7d) | 2027-04-22 → 2027-04-29 (+7d) |  |
| 1 | **RHD4-02-002-LOL-Material Delivery on Site - DOS -Medium Voltage Network - MV** | 2027-04-09 → 2027-04-16 (+7d) | 2027-04-22 → 2027-04-29 (+7d) |  |
| RHD4PRLOLDOSMV1500 | Delivery for Unit Substations - LOL-DOS | 2027-04-09 → 2027-04-16 (+7d) | 2027-04-22 → 2027-04-29 (+7d) | -100d → -107d |
| RHD4PRLOLDOSMV1600 | Delivery for Ring Main Unit (RMU) - LOL-DOS | 2027-04-09 → 2027-04-16 (+7d) | 2027-04-22 → 2027-04-29 (+7d) | -100d → -107d |
| 135 | **RHD4-02-002-LOL-Material Delivery on Site - DOS -Security Network - CCTV** | 2027-03-24 → 2027-03-31 (+7d) | 2027-04-06 → 2027-04-13 (+7d) |  |
| RHD4PRLOLDOSCCTV1000 | Delivery for CCTV Control Room Components - LOL-DOS | 2027-03-24 → 2027-03-31 (+7d) | 2027-04-06 → 2027-04-13 (+7d) | -115d → -122d |
| 136 | **RHD4-02-002-LOL-Material Delivery on Site - DOS -Lift Stations - LFS** | 2027-03-10 → 2027-03-17 (+7d) | 2027-04-15 → 2027-04-22 (+7d) |  |
| RHD4PRLOLDOSLFS1000 | Delivery for Screening Container - LOL-DOS | 2027-03-10 → 2027-03-17 (+7d) | 2027-03-23 → 2027-03-30 (+7d) | -44d → -51d |
| RHD4PRLOLDOSLFS1200 | Delivery for Magnetic type flowmeter - LOL-DOS | 2027-03-10 → 2027-03-17 (+7d) | 2027-03-23 → 2027-03-30 (+7d) | -68d → -75d |
| RHD4PRLOLDOSLFS1300 | Delivery for Surge Tank - LOL-DOS | 2027-03-10 → 2027-03-17 (+7d) | 2027-03-23 → 2027-03-30 (+7d) | -68d → -75d |
| RHD4PRLOLDOSLFS1400 | Delivery for Odours scrubbing system - LOL-DOS | 2027-03-10 → 2027-03-17 (+7d) | 2027-03-23 → 2027-03-30 (+7d) | -68d → -75d |
| RHD4PRLOLDOSLFS1500 | Delivery for JIB Crane - LOL-DOS | 2027-03-10 → 2027-03-17 (+7d) | 2027-03-23 → 2027-03-30 (+7d) | -54d → -61d |
| RHD4PRLOLDOSLFS1600 | Delivery for Standby Diesel Generator - LOL-DOS | 2027-03-10 → 2027-03-17 (+7d) | 2027-03-23 → 2027-03-30 (+7d) | -62d → -69d |
| RHD4PRLOLDOSLFS2000 | Delivery for Isolation Penstock - LOL-DOS | 2027-03-10 → 2027-03-17 (+7d) | 2027-03-23 → 2027-03-30 (+7d) | -62d → -69d |
| RHD4PRLOLDOSLFS1100 | Delivery for Submersible pumps - LOL-DOS | 2027-03-26 → 2027-04-02 (+7d) | 2027-04-08 → 2027-04-15 (+7d) | -32d → -39d |
| RHD4PRLOLDOSLFS1700 | Delivery for Programmable Logic Controllers and Instrumentation for Process Systems - LOL-DOS | 2027-04-02 → 2027-04-09 (+7d) | 2027-04-15 → 2027-04-22 (+7d) | -83d → -90d |
| 1 | **RHD4-02-002-Long Lead Items - LOL-Stageing Time - STAG** | 2027-03-24 → 2027-03-31 (+7d) | 2027-04-28 → 2027-05-05 (+7d) |  |
| 1 | **RHD4-02-002-LOL-Material Delivery on Site - DOS -Medium Voltage Network - MV** | 2027-04-23 → 2027-04-30 (+7d) | 2027-04-28 → 2027-05-05 (+7d) |  |
| RHD4PRLOLSTAGMV1601 | Staging time for Unit Substations - LOL-STAG | 2027-04-23 → 2027-04-30 (+7d) | 2027-04-28 → 2027-05-05 (+7d) | -100d → -107d |
| RHD4PRLOLSTAGMV1602 | Staging time for Ring Main Unit (RMU) - LOL-STAG | 2027-04-23 → 2027-04-30 (+7d) | 2027-04-28 → 2027-05-05 (+7d) | -100d → -107d |
| 135 | **RHD4-02-002-LOL-Material Delivery on Site - DOS -Security Network - CCTV** | 2027-04-07 → 2027-04-14 (+7d) | 2027-04-12 → 2027-04-19 (+7d) |  |
| RHD4PRLOLSTACCTV1001 | Staging time for CCTV Control Room Components - LOL-STAG | 2027-04-07 → 2027-04-14 (+7d) | 2027-04-12 → 2027-04-19 (+7d) | -115d → -122d |
| 136 | **RHD4-02-002-LOL-Material Delivery on Site - DOS -Lift Stations - LFS** | 2027-03-24 → 2027-03-31 (+7d) | 2027-04-21 → 2027-04-28 (+7d) |  |
| RHD4PRLOLSTAGLFS1000 | Staging time for Screening Container - LOL-STAG | 2027-03-24 → 2027-03-31 (+7d) | 2027-03-29 → 2027-04-05 (+7d) | -44d → -51d |
| RHD4PRLOLSTAGLFS1200 | Staging time for Magnetic type flowmeter - LOL-STAG | 2027-03-24 → 2027-03-31 (+7d) | 2027-03-29 → 2027-04-05 (+7d) | -68d → -75d |
| RHD4PRLOLSTAGLFS1300 | Staging time for Surge Tank - LOL-STAG | 2027-03-24 → 2027-03-31 (+7d) | 2027-03-29 → 2027-04-05 (+7d) | -68d → -75d |
| RHD4PRLOLSTAGLFS1400 | Staging time for Odours scrubbing system - LOL-STAG | 2027-03-24 → 2027-03-31 (+7d) | 2027-03-29 → 2027-04-05 (+7d) | -68d → -75d |
| RHD4PRLOLSTAGLFS1500 | Staging time for JIB Crane - LOL-STAG | 2027-03-24 → 2027-03-31 (+7d) | 2027-03-29 → 2027-04-05 (+7d) | -54d → -61d |
| RHD4PRLOLSTAGLFS1600 | Staging time for Standby Diesel Generator - LOL-STAG | 2027-03-24 → 2027-03-31 (+7d) | 2027-03-29 → 2027-04-05 (+7d) | -62d → -69d |
| RHD4PRLOLSTAGLFS2000 | Staging time for Isolation Penstock - LOL-STAG | 2027-03-24 → 2027-03-31 (+7d) | 2027-03-29 → 2027-04-05 (+7d) | -62d → -69d |
| RHD4PRLOLSTAGLFS1100 | Staging time for Submersible pumps - LOL-STAG | 2027-04-09 → 2027-04-16 (+7d) | 2027-04-14 → 2027-04-21 (+7d) | -32d → -39d |
| RHD4PRLOLSTAGLFS1700 | Staging time for Programmable Logic Controllers and Instrumentation for Process Systems - LOL-STAG | 2027-04-16 → 2027-04-23 (+7d) | 2027-04-21 → 2027-04-28 (+7d) | -83d → -90d |
| 98 | **RHD4-02-002-Short Lead Items - SHL** |  | 2027-02-19 → 2027-02-10 (-9d) |  |
| 99 | **RHD4-02-002-Short Lead Items - SHL-Material Purchase Order - PO** |  | 2026-12-14 → 2026-12-21 (+7d) |  |
| 104 | **RHD4-02-002-SHL-Material Purchase Order - PO-Medium Voltage - MV** |  | 2026-12-07 → 2026-12-14 (+7d) |  |
| RHD4PRSHLPOMV1100 | Material Purchase Order for Medium Voltage Cable 3Cx500 mm2 - SHL-MV | 2026-12-01 → 2026-12-08 (+7d) | 2026-12-07 → 2026-12-14 (+7d) | -192d → -188d |
| RHD4PRSHLPOMV1200 | Material Purchase Order for Medium Voltage Cable 3Cx50 mm2 - SHL-MV | 2026-12-01 → 2026-12-08 (+7d) | 2026-12-07 → 2026-12-14 (+7d) | -192d → -188d |
| RHD4PRSHLPOMV1300 | Material Purchase Order for Straight Joints 3Cx50 mm2 - SHL-MV | 2026-12-01 → 2026-12-08 (+7d) | 2026-12-07 → 2026-12-14 (+7d) | -192d → -188d |
| RHD4PRSHLPOMV1400 | Material Purchase Order for Normally Open Points (Outdoor type) - SHL-MV | 2026-12-01 → 2026-12-08 (+7d) | 2026-12-07 → 2026-12-14 (+7d) | -192d → -188d |
| 105 | **RHD4-02-002-SHL-Material Purchase Order - PO-Low Voltage - LV** |  | 2026-11-30 → 2026-12-07 (+7d) |  |
| RHD4PRSHLPOLV1200 | Material Purchase Order for Distribution Pillars - SHL-LV | 2026-11-24 → 2026-12-01 (+7d) | 2026-11-30 → 2026-12-07 (+7d) | -186d → -182d |
| RHD4PRSHLPOLV1300 | Material Purchase Order for KWH Meter mounting Frame - SHL-LV | 2026-11-24 → 2026-12-01 (+7d) | 2026-11-30 → 2026-12-07 (+7d) | -186d → -182d |
| RHD4PRSHLPOLV1400 | Material Purchase Order for Low Voltage Drawpit - SHL-LV | 2026-11-24 → 2026-12-01 (+7d) | 2026-11-30 → 2026-12-07 (+7d) | -176d → -172d |
| RHD4PRSHLPOLV1500 | Material Purchase Order for Earthing for Pillars and Panels - SHL-LV | 2026-11-24 → 2026-12-01 (+7d) | 2026-11-30 → 2026-12-07 (+7d) | -182.02d → -179d |
| 110 | **RHD4-02-002-SHL-Material Purchase Order - PO-Security Network - CCTV** | 2026-11-17 → 2026-11-24 (+7d) | 2026-12-14 → 2026-12-21 (+7d) |  |
| RHD4PRSHLPOCCTV1000 | Material Purchase Order for CCTV Network Poles - SHL-CCTV | 2026-11-17 → 2026-11-24 (+7d) | 2026-11-23 → 2026-11-30 (+7d) | -194.02d → -191d |
| RHD4PRSHLPOCCTV1200 | Material Purchase Order for CCTV Panels and Panel's Components - SHL-CCTV | 2026-11-24 → 2026-12-01 (+7d) | 2026-11-30 → 2026-12-07 (+7d) | -194.02d → -191d |
| RHD4PRSHLPOCCTV1300 | Material Purchase Order for CCTV Fiber Optic Cables - SHL-CCTV | 2026-12-01 → 2026-12-08 (+7d) | 2026-12-07 → 2026-12-14 (+7d) | -194.02d → -191d |
| RHD4PRSHLPOCCTV1100 | Material Purchase Order for CCTV Network Cameras - SHL-CCTV | 2026-12-08 → 2026-12-15 (+7d) | 2026-12-14 → 2026-12-21 (+7d) | -194.02d → -191d |
| 111 | **RHD4-02-002-SHL-Material Purchase Order - PO-Road Works - RD** |  | 2026-12-07 → 2026-12-14 (+7d) |  |
| RHD4PRSHLPORD1600 | Material Purchase Order for Traffic Signage - SHL-RD | 2026-11-10 → 2026-11-17 (+7d) | 2026-11-16 → 2026-11-23 (+7d) | -188.02d → -185d |
| RHD4PRSHLPORD1300 | Material Purchase Order for Interlock Precast Concrete Unit Paving - SHL-RD | 2026-11-17 → 2026-11-24 (+7d) | 2026-11-23 → 2026-11-30 (+7d) | -188.02d → -185d |
| RHD4PRSHLPORD1400 | Material Purchase Order for Wheel Stopper - SHL-RD | 2026-11-24 → 2026-12-01 (+7d) | 2026-11-30 → 2026-12-07 (+7d) | -188.02d → -185d |
| RHD4PRSHLPORD1500 | Material Purchase Order for Pavement Marking - SHL-RD | 2026-12-01 → 2026-12-08 (+7d) | 2026-12-07 → 2026-12-14 (+7d) | -188.02d → -185d |
| 112 | **RHD4-02-002-SHL-Material Purchase Order - PO-Lift Stations - LFS** |  | 2026-12-07 → 2026-12-14 (+7d) |  |
| RHD4PRSHLPOLFS1100 | Material Purchase Order for Roof Waterproofing System - SHL-LFS | 2026-11-10 → 2026-11-17 (+7d) | 2026-11-16 → 2026-11-23 (+7d) | -180d → -176d |
| RHD4PRSHLPOLFS1600 | Material Purchase Order for Epoxy Coating - SHL-LFS | 2026-11-10 → 2026-11-17 (+7d) | 2026-11-16 → 2026-11-23 (+7d) | -174d → -170d |
| RHD4PRSHLPOLFS2100 | Material Purchase Order for UPVC Pipes for Sanitary Drain - SHL-LFS | 2026-11-10 → 2026-11-17 (+7d) | 2026-11-16 → 2026-11-23 (+7d) | -174d → -170d |

| ID | Task | Start | Finish | Complete | Total float |
| --- | --- | --- | --- | --- | --- |
| RHD4PRSHLPOLFS2300 | Material Purchase Order for Motor Control Center (MCC) - SHL-LFS | 2026-11-10 → 2026-11-17 (+7d) | 2026-11-23 → 2026-11-30 (+7d) |  | -180d → -176d |
| RHD4PRSHLPOLFS2400 | Material Purchase Order for lighting and power panel boards - SHL-LFS | 2026-11-10 → 2026-11-17 (+7d) | 2026-11-16 → 2026-11-23 (+7d) |  | -174d → -170d |
| RHD4PRSHLPOLFS3000 | Material Purchase Order for Fire Alarm System - SHL-LFS | 2026-11-10 → 2026-11-17 (+7d) | 2026-11-16 → 2026-11-23 (+7d) |  | -174d → -170d |
| RHD4PRSHLPOLFS1300 | Material Purchase Order for Fluid-Applied Waterproofing - SHL-LFS | 2026-11-17 → 2026-11-24 (+7d) | 2026-11-23 → 2026-11-30 (+7d) |  | -180d → -176d |
| RHD4PRSHLPOLFS2800 | Material Purchase Order for Wiring Devices - SHL-LFS | 2026-11-17 → 2026-11-24 (+7d) | 2026-11-23 → 2026-11-30 (+7d) |  | -180d → -176d |
| RHD4PRSHLPOLFS1000 | Material Purchase Order for Metal Ladder and checkered Plate - SHL-LFS | 2026-11-24 → 2026-12-01 (+7d) | 2026-11-30 → 2026-12-07 (+7d) |  | -182.02d → -179d |
| RHD4PRSHLPOLFS1400 | Material Purchase Order for Metal Doors and Access Doors and Frames - SHL-LFS | 2026-11-24 → 2026-12-01 (+7d) | 2026-11-30 → 2026-12-07 (+7d) |  | -186d → -182d |
| RHD4PRSHLPOLFS2200 | Material Purchase Order for wall mounted Split/AC - SHL-LFS | 2026-11-24 → 2026-12-01 (+7d) | 2026-11-30 → 2026-12-07 (+7d) |  | -186d → -182d |
| RHD4PRSHLPOLFS2900 | Material Purchase Order for Enclosed Switches and Circuit Breakers - SHL-LFS | 2026-11-24 → 2026-12-01 (+7d) | 2026-11-30 → 2026-12-07 (+7d) |  | -192d → -188d |
| RHD4PRSHLPOLFS1500 | Material Purchase Order for Painting - SHL-LFS | 2026-12-01 → 2026-12-08 (+7d) | 2026-12-07 → 2026-12-14 (+7d) |  | -192d → -188d |
| RHD4PRSHLPOLFS2500 | Material Purchase Order for Earthing for Lift Stations - SHL-LFS | 2026-12-01 → 2026-12-08 (+7d) | 2026-12-07 → 2026-12-14 (+7d) |  | -192d → -188d |
| RHD4PRSHLPOLFS3100 | Material Purchase Order for Fences and Gates - SHL-LFS | 2026-12-01 → 2026-12-08 (+7d) | 2026-12-07 → 2026-12-14 (+7d) |  | -192d → -188d |
| 113 | **RHD4-02-002-Short Lead Items - SHL-Material Delivery on Site - DOS** |  | 2027-02-13 → 2027-01-13 (-31d) |  |  |
| 114 | **RHD4-02-002-SHL-Material Delivery on Site - DOS -Storm Network - ST** |  | 2026-12-25 → 2027-01-01 (+7d) |  |  |
| 2 | **RHD4-02-002-SHL-Material Delivery on Site - DOS -Storm Network - ST - Zone 2** |  | 2026-11-22 → 2026-11-29 (+7d) |  |  |
| RHD4PRSHLDOSST1701 | Delivery for Metal Works (Stairs - Manhole Covers) Zone 2 - SHL-DOS | 2026-11-10 → 2026-11-17 (+7d) | 2026-11-15 → 2026-11-22 (+7d) |  | -196.02d → -193d |
| RHD4PRSHLDOSST1401 | Delivery for Grouted Riprap Zone 2 - SHL-DOS | 2026-11-17 → 2026-11-24 (+7d) | 2026-11-22 → 2026-11-29 (+7d) |  | -203.02d → -200d |
| 3 | **RHD4-02-002-SHL-Material Delivery on Site - DOS -Storm Network - ST - Zone 3** |  | 2026-11-15 → 2026-11-22 (+7d) |  |  |
| RHD4PRSHLDOSST1702 | Delivery for Metal Works (Stairs - Manhole Covers) Zone 3 - SHL-DOS | 2026-11-10 → 2026-11-17 (+7d) | 2026-11-15 → 2026-11-22 (+7d) |  | -196.02d → -193d |
| 4 | **RHD4-02-002-SHL-Material Delivery on Site - DOS -Storm Network - ST - Zone 4** |  | 2026-11-15 → 2026-11-22 (+7d) |  |  |
| RHD4PRSHLDOSST1703 | Delivery for Metal Works (Stairs - Manhole Covers) Zone 4 - SHL-DOS | 2026-11-10 → 2026-11-17 (+7d) | 2026-11-15 → 2026-11-22 (+7d) |  | -196.02d → -193d |
| 5 | **RHD4-02-002-SHL-Material Delivery on Site - DOS -Storm Network - ST - Zone 5** |  | 2026-12-25 → 2027-01-01 (+7d) |  |  |
| RHD4PRSHLDOSST1304 | Delivery for Catch basin Zone 5 - SHL-DOS |  | 2026-12-25 → 2027-01-01 (+7d) |  | -229d → -224d |
| 7 | **RHD4-02-002-SHL-Material Delivery on Site - DOS -Storm Network - ST - Zone 8** |  | 2026-11-15 → 2026-11-22 (+7d) |  |  |
| RHD4PRSHLDOSST1707 | Delivery for Metal Works (Stairs - Manhole Covers) Zone 8 - SHL-DOS | 2026-11-10 → 2026-11-17 (+7d) | 2026-11-15 → 2026-11-22 (+7d) |  | -196.02d → -193d |
| 9 | **RHD4-02-002-SHL-Material Delivery on Site - DOS -Storm Network - ST - Zone 9** |  | 2026-11-15 → 2026-11-22 (+7d) |  |  |
| RHD4PRSHLDOSST1708 | Delivery for Metal Works (Stairs - Manhole Covers) Zone 9 - SHL-DOS | 2026-11-10 → 2026-11-17 (+7d) | 2026-11-15 → 2026-11-22 (+7d) |  | -196.02d → -193d |
| 115 | **RHD4-02-002-SHL-Material Delivery on Site - DOS -Sewage Network - SW** |  | 2026-11-21 → 2026-11-28 (+7d) |  |  |
| 1 | **RHD4-02-002-SHL-Material Delivery on Site - DOS -Sewage Network - SW - Zone 1** |  | 2026-11-20 → 2026-11-27 (+7d) |  |  |
| RHD4PRSHLDOSSW1400 | Delivery for Metal Works (Stairs - Manhole Covers) Zone 1 - SHL-DOS | 2026-11-15 → 2026-11-22 (+7d) | 2026-11-20 → 2026-11-27 (+7d) |  | -201.02d → -198d |
| 2 | **RHD4-02-002-SHL-Material Delivery on Site - DOS -Sewage Network - SW - Zone 2** |  | 2026-11-15 → 2026-11-22 (+7d) |  |  |
| RHD4PRSHLDOSSW1401 | Delivery for Metal Works (Stairs - Manhole Covers) Zone 2 - SHL-DOS | 2026-11-10 → 2026-11-17 (+7d) | 2026-11-15 → 2026-11-22 (+7d) |  | -201d → -196d |
| 3 | **RHD4-02-002-SHL-Material Delivery on Site - DOS -Sewage Network - SW - Zone 3** |  | 2026-11-15 → 2026-11-22 (+7d) |  |  |
| RHD4PRSHLDOSSW1202 | Delivery for Valves Zone 3 - SHL-DOS | 2026-11-10 → 2026-11-17 (+7d) | 2026-11-15 → 2026-11-22 (+7d) |  | -202.02d → -193d |
| RHD4PRSHLDOSSW1402 | Delivery for Metal Works (Stairs - Manhole Covers) Zone 3 - SHL-DOS | 2026-11-10 → 2026-11-17 (+7d) | 2026-11-15 → 2026-11-22 (+7d) |  | -196.02d → -193d |
| 4 | **RHD4-02-002-SHL-Material Delivery on Site - DOS -Sewage Network - SW - Zone 4** |  | 2026-11-20 → 2026-11-27 (+7d) |  |  |
| RHD4PRSHLDOSSW1203 | Delivery for Valves Zone 4 - SHL-DOS | 2026-11-10 → 2026-11-17 (+7d) | 2026-11-15 → 2026-11-22 (+7d) |  | -202.02d → -199d |
| RHD4PRSHLDOSSW1403 | Delivery for Metal Works (Stairs - Manhole Covers) Zone 4 - SHL-DOS | 2026-11-15 → 2026-11-22 (+7d) | 2026-11-20 → 2026-11-27 (+7d) |  | -201.02d → -198d |
| 5 | **RHD4-02-002-SHL-Material Delivery on Site - DOS -Sewage Network - SW - Zone 6** |  | 2026-11-21 → 2026-11-27 (+6d) |  |  |
| RHD4PRSHLDOSSW1305 | Delivery for Precast Concrete Zone 6 - SHL-DOS | 2026-11-10 → 2026-08-08 A (-94d) | 2026-11-15 → 2026-08-13 A (-94d) | 0% → 100% | -202.02d → none |
| RHD4PRSHLDOSSW1405 | Delivery for Metal Works (Stairs - Manhole Covers) Zone 6 - SHL-DOS | 2026-11-16 → 2026-11-22 (+6d) | 2026-11-21 → 2026-11-27 (+6d) |  | -202.02d → -192d |
| 8 | **RHD4-02-002-SHL-Material Delivery on Site - DOS -Sewage Network - SW - Zone 7** |  | 2026-11-21 → 2026-11-28 (+7d) |  |  |
| RHD4PRSHLDOSSW1206 | Delivery for Valves Zone 7 - SHL-DOS | 2026-11-10 → 2026-11-17 (+7d) | 2026-11-15 → 2026-11-22 (+7d) |  | -208.02d → -199d |
| RHD4PRSHLDOSSW1306 | Delivery for Precast Concrete Zone 7 - SHL-DOS | 2026-11-10 → 2026-11-17 (+7d) | 2026-11-15 → 2026-11-22 (+7d) |  | -196.02d → -193d |
| RHD4PRSHLDOSSW1506 | Delivery for HDPE pipes Zone 7 - SHL-DOS | 2026-11-10 → 2026-11-17 (+7d) | 2026-11-15 → 2026-11-22 (+7d) |  | -202.02d → -193d |
| RHD4PRSHLDOSSW1406 | Delivery for Metal Works (Stairs - Manhole Covers) Zone 7 - SHL-DOS | 2026-11-16 → 2026-11-23 (+7d) | 2026-11-21 → 2026-11-28 (+7d) |  | -202.02d → -199d |
| 6 | **RHD4-02-002-SHL-Material Delivery on Site - DOS -Sewage Network - SW - Zone 8** |  | 2026-11-21 → 2026-11-22 (+1d) |  |  |
| RHD4PRSHLDOSSW1007 | Delivery for UPVC pipes Zone 8 - SHL-DOS | 2026-11-16 → 2026-08-15 A (-93d) | 2026-11-21 → 2026-08-20 A (-93d) | 0% → 100% | -202.02d → none |
| RHD4PRSHLDOSSW1307 | Delivery for Precast Concrete Zone 8 - SHL-DOS | 2026-11-10 → 2026-11-17 (+7d) | 2026-11-15 → 2026-11-22 (+7d) |  | -202.02d → -187d |
| RHD4PRSHLDOSSW1407 | Delivery for Metal Works (Stairs - Manhole Covers) Zone 8 - SHL-DOS | 2026-11-10 → 2026-11-17 (+7d) | 2026-11-15 → 2026-11-22 (+7d) |  | -201d → -190d |
| 9 | **RHD4-02-002-SHL-Material Delivery on Site - DOS -Sewage Network - SW - Zone 9** |  | 2026-11-21 → 2026-11-22 (+1d) |  |  |
| RHD4PRSHLDOSSW1308 | Delivery for Precast Concrete Zone 9 - SHL-DOS | 2026-11-10 → 2026-08-08 A (-94d) | 2026-11-15 → 2026-08-13 A (-94d) | 0% → 100% | -202.02d → none |
| RHD4PRSHLDOSSW1008 | Delivery for UPVC pipes Zone 9 - SHL-DOS | 2026-11-16 → 2026-08-15 A (-93d) | 2026-11-21 → 2026-08-20 A (-93d) | 0% → 100% | -202.02d → none |
| RHD4PRSHLDOSSW1408 | Delivery for Metal Works (Stairs - Manhole Covers) Zone 9 - SHL-DOS | 2026-11-10 → 2026-11-17 (+7d) | 2026-11-15 → 2026-11-22 (+7d) |  | -201d → -196d |
| 116 | **RHD4-02-002-SHL-Material Delivery on Site - DOS -Potable Water Network - PT** | 2026-09-01 → 2026-08-01 (-31d) | 2026-11-29 → 2026-12-06 (+7d) |  |  |
| 1 | **RHD4-02-002-SHL-Material Delivery on Site - DOS -Potable Water Network - PT - Crossings** | 2026-11-10 → 2026-08-01 (-101d) | 2026-11-22 → 2026-11-29 (+7d) |  |  |
| RHD4PRSHLDOSPTCr1000 | Delivery for HDPE pipes - PTCr - SHL-DOS | 2026-11-10 → 2026-08-01 A (-101d) | 2026-11-15 → 2026-08-06 A (-101d) | 0% → 100% | -201d → none |
| RHD4PRSHLDOSPTCr1100 | Delivery for Precast Concrete - PTCr - SHL-DOS | 2026-11-10 → 2026-09-01 A (-70d) | 2026-11-15 → 2026-09-06 A (-70d) | 0% → 100% | -208.02d → none |
| RHD4PRSHLDOSPTCr1200 | Delivery for Valves - PTCr - SHL-DOS | 2026-11-10 → 2026-11-17 (+7d) | 2026-11-15 → 2026-11-22 (+7d) |  | -214.02d → -205d |
| RHD4PRSHLDOSPTCr1300 | Delivery for Stem and Surface box - PTCr - SHL-DOS | 2026-11-10 → 2026-11-17 (+7d) | 2026-11-15 → 2026-11-22 (+7d) |  | -196.02d → -193d |
| RHD4PRSHLDOSPTCr1500 | Delivery for Fire Hydrants - PTCr - SHL-DOS | 2026-11-16 → 2026-11-23 (+7d) | 2026-11-21 → 2026-11-28 (+7d) |  | -208.02d → -205d |
| RHD4PRSHLDOSPTCr1400 | Delivery for Metal Works (Chamber's Covers) - PTCr - SHL-DOS | 2026-11-17 → 2026-11-24 (+7d) | 2026-11-22 → 2026-11-29 (+7d) |  | -209.02d → -206d |
| 2 | **RHD4-02-002-SHL-Material Delivery on Site - DOS -Potable Water Network - PT - Network** |  | 2026-11-29 → 2026-12-06 (+7d) |  |  |
| RHD4PRSHLDOSPT1200 | Delivery for Valves - PT - SHL-DOS | 2026-11-10 → 2026-11-17 (+7d) | 2026-11-15 → 2026-11-22 (+7d) |  | -202.02d → -199d |
| RHD4PRSHLDOSPT1400 | Delivery for Metal Works (Chamber's Covers) - PT - SHL-DOS | 2026-11-17 → 2026-11-24 (+7d) | 2026-11-22 → 2026-11-29 (+7d) |  | -203.02d → -200d |
| RHD4PRSHLDOSPT1500 | Delivery for Fire Hydrants - PT - SHL-DOS | 2026-11-24 → 2026-12-01 (+7d) | 2026-11-29 → 2026-12-06 (+7d) |  | -210.02d → -207d |
| 117 | **RHD4-02-002-SHL-Material Delivery on Site - DOS -Irrigation Network - IRR** |  | 2027-01-06 → 2027-01-13 (+7d) |  |  |
| 1 | **RHD4-02-002-SHL-Material Delivery on Site - DOS -Irrigation Network - IRR - Crossings** | 2026-11-10 → 2026-08-19 (-83d) | 2026-11-27 → 2026-12-04 (+7d) |  |  |
| RHD4PRSHLDOSIRRC1000 | Delivery for HDPE pipes - IRRC - SHL-DOS | 2026-11-10 → 2026-08-19 A (-83d) | 2026-11-15 → 2026-08-24 A (-83d) | 0% → 100% | -220.02d → none |
| RHD4PRSHLDOSIRRC1100 | Delivery for Valves - IRRC - SHL-DOS | 2026-11-10 → 2026-11-17 (+7d) | 2026-11-15 → 2026-11-22 (+7d) |  | -220.02d → -217d |

| ID | Task | Start | Finish | Complete | Total float |
| --- | --- | --- | --- | --- | --- |
| RHD4PRSHLDOSIRRC1200 | Delivery for Precast Concrete - IRRC - SHL-DOS | 2026-11-16 → 2026-11-17 (+1d) | 2026-11-21 → 2026-11-22 (+1d) |  | -220.02d → -211d |
| RHD4PRSHLDOSIRRC1300 | Delivery for Stem and Surface box - IRRC - SHL-DOS | 2026-11-16 → 2026-11-23 (+7d) | 2026-11-21 → 2026-11-28 (+7d) |  | -214.02d → -211d |
| RHD4PRSHLDOSIRRC1400 | Delivery for Metal Works (Chamber's Covers) - IRRC - SHL-DOS | 2026-11-22 → 2026-11-29 (+7d) | 2026-11-27 → 2026-12-04 (+7d) |  | -214.02d → -211d |
| 2 | **RHD4-02-002-SHL-Material Delivery on Site - DOS -Irrigation Network - IRR - Network** |  | 2027-01-06 → 2027-01-13 (+7d) |  |  |
| RHD4PRSHLDOSIRR1000 | Delivery for HDPE pipes - IRR - SHL-DOS | 2026-11-10 → 2026-08-17 A (-85d) | 2026-11-15 → 2026-08-22 A (-85d) | 0% → 100% | -202.02d → none |
| RHD4PRSHLDOSIRR1100 | Delivery for Valves - IRR - SHL-DOS | 2026-11-10 → 2026-11-17 (+7d) | 2026-11-15 → 2026-11-22 (+7d) |  | -196.02d → -193d |
| RHD4PRSHLDOSIRR1200 | Delivery for Precast Concrete - IRR - SHL-DOS | 2026-11-16 → 2026-11-17 (+1d) | 2026-11-21 → 2026-11-22 (+1d) |  | -202.02d → -193d |
| RHD4PRSHLDOSIRR1400 | Delivery for Metal Works (Chamber's Covers) - IRR - SHL-DOS | 2027-01-01 → 2027-01-08 (+7d) | 2027-01-06 → 2027-01-13 (+7d) |  | -233d → -228d |
| 118 | **RHD4-02-002-SHL-Material Delivery on Site - DOS -Medium Voltage - MV** | 2026-11-10 → 2026-11-17 (+7d) | 2026-12-13 → 2026-12-20 (+7d) |  |  |
| RHD4PRSHLDOSMV1000 | Delivery for UPVC Pipes for Duct Banks - SHL-DOS | 2026-11-10 → 2026-11-17 (+7d) | 2026-11-15 → 2026-11-22 (+7d) |  | -201d → -196d |
| RHD4PRSHLDOSMV1100 | Delivery for Medium Voltage Cable 3Cx500 mm2 - SHL-DOS | 2026-12-08 → 2026-12-15 (+7d) | 2026-12-13 → 2026-12-20 (+7d) |  | -229d → -224d |
| RHD4PRSHLDOSMV1200 | Delivery for Medium Voltage Cable 3Cx50 mm2 - SHL-DOS | 2026-12-08 → 2026-12-15 (+7d) | 2026-12-13 → 2026-12-20 (+7d) |  | -229d → -224d |
| RHD4PRSHLDOSMV1300 | Delivery for Straight Joints 3Cx50 mm2 - SHL-DOS | 2026-12-08 → 2026-12-15 (+7d) | 2026-12-13 → 2026-12-20 (+7d) |  | -229d → -224d |
| RHD4PRSHLDOSMV1400 | Delivery for Normally Open Points (Outdoor type) - SHL-DOS | 2026-12-08 → 2026-12-15 (+7d) | 2026-12-13 → 2026-12-20 (+7d) |  | -229d → -224d |
| 119 | **RHD4-02-002-SHL-Material Delivery on Site - DOS -Low Voltage - LV** | 2026-11-10 → 2026-11-17 (+7d) | 2027-01-11 → 2027-01-13 (+2d) |  |  |
| RHD4PRSHLDOSLV1000 | Delivery for UPVC Pipes for Duct Banks - SHL-DOS | 2026-11-10 → 2026-11-17 (+7d) | 2026-11-15 → 2026-11-22 (+7d) |  | -201d → -196d |
| RHD4PRSHLDOSLV1100 | Delivery for Low voltage Cables - SHL-DOS | 2026-11-10 → 2026-11-17 (+7d) | 2026-11-15 → 2026-11-22 (+7d) |  | -201d → -196d |
| RHD4PRSHLDOSLV1200 | Delivery for Distribution Pillars - SHL-DOS | 2026-12-01 → 2026-12-08 (+7d) | 2026-12-06 → 2026-12-13 (+7d) |  | -222d → -217d |
| RHD4PRSHLDOSLV1300 | Delivery for KWH Meter mounting Frame - SHL-DOS | 2026-12-01 → 2026-12-08 (+7d) | 2026-12-06 → 2026-12-13 (+7d) |  | -222d → -217d |
| RHD4PRSHLDOSLV1500 | Delivery for Earthing for Pillars and Panels - SHL-DOS | 2026-12-01 → 2026-12-08 (+7d) | 2026-12-06 → 2026-12-13 (+7d) |  | -217.02d → -214d |
| RHD4PRSHLDOSLV1400 | Delivery for Low Voltage Drawpit - SHL-DOS | 2027-01-05 → 2027-01-08 (+3d) | 2027-01-11 → 2027-01-13 (+2d) |  | -231.02d → -228d |
| 120 | **RHD4-02-002-SHL-Material Delivery on Site - DOS -Street Lighting Network -SL** |  | 2027-01-17 → 2026-11-12 (-66d) |  |  |
| RHD4PRSHLDOSSL1100 | Delivery for Street Lighting Cables - SHL-DOS | 2027-01-11 → 2026-11-10 A (-62d) | 2027-01-17 → 2026-11-12 A (-66d) | 0% → 100% | -229.02d → none |
| 123 | **RHD4-02-002-SHL-Material Delivery on Site - DOS -Information and Communication Technologies - ICT** | 2026-11-10 → 2026-09-07 (-64d) | 2027-02-13 → 2026-11-22 (-83d) |  |  |
| RHD4PRSHLDOSICT1100 | Delivery for HDPE Road Crossings Ducts - SHL-DOS | 2027-02-02 → 2026-09-07 A (-148d) | 2027-02-07 → 2026-09-12 A (-148d) | 0% → 100% | -232d → none |
| RHD4PRSHLDOSICT1000 | Delivery for HDPE Ducts - SHL-DOS | 2027-02-08 → 2026-10-01 A (-130d) | 2027-02-13 → 2026-10-06 A (-130d) | 0% → 100% | -230d → none |
| RHD4PRSHLDOSICT1200 | Delivery for Telecommunications Manhole - SHL-DOS | 2026-11-10 → 2026-11-17 (+7d) | 2026-11-15 → 2026-11-22 (+7d) |  | -196.02d → -193d |
| 124 | **RHD4-02-002-SHL-Material Delivery on Site - DOS -Security Network - CCTV** | 2026-11-24 → 2026-12-01 (+7d) | 2026-12-20 → 2026-12-27 (+7d) |  |  |
| RHD4PRSHLDOSCCTV1000 | Delivery for CCTV Network Poles - SHL-DOS | 2026-11-24 → 2026-12-01 (+7d) | 2026-11-29 → 2026-12-06 (+7d) |  | -210.02d → -207d |
| RHD4PRSHLDOSCCTV1200 | Delivery for CCTV Panels and Panel's Components - SHL-DOS | 2026-12-01 → 2026-12-08 (+7d) | 2026-12-06 → 2026-12-13 (+7d) |  | -217.02d → -214d |
| RHD4PRSHLDOSCCTV1300 | Delivery for CCTV Fiber Optic Cables - SHL-DOS | 2026-12-08 → 2026-12-15 (+7d) | 2026-12-13 → 2026-12-20 (+7d) |  | -224.02d → -221d |
| RHD4PRSHLDOSCCTV1100 | Delivery for CCTV Network Cameras - SHL-DOS | 2026-12-15 → 2026-12-22 (+7d) | 2026-12-20 → 2026-12-27 (+7d) |  | -231.02d → -228d |
| 125 | **RHD4-02-002-SHL-Material Delivery on Site - DOS -Road Works - RD** | 2026-11-10 → 2026-08-27 (-75d) | 2026-12-13 → 2026-12-20 (+7d) |  |  |
| RHD4PRSHLDOSRD1000 | Delivery for Aggregate Base Courses - SHL-DOS | 2026-11-10 → 2026-08-27 A (-75d) | 2026-11-15 → 2026-09-01 A (-75d) | 0% → 100% | -201d → none |
| RHD4PRSHLDOSRD1100 | Delivery for Bituminous Asphalt Layers - SHL-DOS | 2026-11-10 → 2026-09-01 A (-70d) | 2026-11-15 → 2026-09-06 A (-70d) | 0% → 100% | -201d → none |
| RHD4PRSHLDOSRD1200 | Delivery for Precast Concrete Curbstone - SHL-DOS | 2026-11-10 A | 2026-11-15 → 2026-11-11 A (-4d) | 0% → 100% | -201d → none |
| RHD4PRSHLDOSRD1600 | Delivery for Traffic Signage - SHL-DOS | 2026-11-17 → 2026-11-24 (+7d) | 2026-11-22 → 2026-11-29 (+7d) |  | -208d → -203d |
| RHD4PRSHLDOSRD1300 | Delivery for Interlock Precast Concrete Unit Paving - SHL-DOS | 2026-11-24 → 2026-12-01 (+7d) | 2026-11-29 → 2026-12-06 (+7d) |  | -210.02d → -207d |
| RHD4PRSHLDOSRD1400 | Delivery for Wheel Stopper - SHL-DOS | 2026-12-01 → 2026-12-08 (+7d) | 2026-12-06 → 2026-12-13 (+7d) |  | -217.02d → -214d |
| RHD4PRSHLDOSRD1500 | Delivery for Pavement Marking - SHL-DOS | 2026-12-08 → 2026-12-15 (+7d) | 2026-12-13 → 2026-12-20 (+7d) |  | -224.02d → -221d |
| 126 | **RHD4-02-002-SHL-Material Delivery on Site - DOS -Lift Stations - LFS** | 2026-11-10 → 2026-11-17 (+7d) | 2026-12-13 → 2026-12-20 (+7d) |  |  |
| RHD4PRSHLDOSLFS1700 | Delivery for Ductile Iron Pipes & Fittings - SHL-DOS | 2026-11-10 → 2026-11-17 (+7d) | 2026-11-15 → 2026-11-22 (+7d) |  | -201d → -196d |
| RHD4PRSHLDOSLFS1800 | Delivery for Sewage Lift Station Valves - SHL-DOS | 2026-11-10 → 2026-11-17 (+7d) | 2026-11-15 → 2026-11-22 (+7d) |  | -201d → -196d |
| RHD4PRSHLDOSLFS1900 | Delivery for Basket screen - SHL-DOS | 2026-11-10 → 2026-11-17 (+7d) | 2026-11-15 → 2026-11-22 (+7d) |  | -201d → -196d |
| RHD4PRSHLDOSLFS2600 | Delivery for Low Voltage Cables - SHL-DOS | 2026-11-10 → 2026-11-17 (+7d) | 2026-11-15 → 2026-11-22 (+7d) |  | -201d → -196d |
| RHD4PRSHLDOSLFS2700 | Delivery for Lighting Fixtures - SHL-DOS | 2026-11-10 → 2026-11-17 (+7d) | 2026-11-15 → 2026-11-22 (+7d) |  | -196.02d → -193d |
| RHD4PRSHLDOSLFS1100 | Delivery for Roof Waterproofing System - SHL-DOS | 2026-11-17 → 2026-11-24 (+7d) | 2026-11-22 → 2026-11-29 (+7d) |  | -208d → -203d |
| RHD4PRSHLDOSLFS1200 | Delivery for Bituminous Sheet Waterproofing - SHL-DOS | 2026-11-17 → 2026-11-24 (+7d) | 2026-11-22 → 2026-11-29 (+7d) |  | -208d → -203d |
| RHD4PRSHLDOSLFS1600 | Delivery for Epoxy Coating - SHL-DOS | 2026-11-17 → 2026-11-24 (+7d) | 2026-11-22 → 2026-11-29 (+7d) |  | -208d → -203d |
| RHD4PRSHLDOSLFS2100 | Delivery for UPVC Pipes for Sanitary Drain - SHL-DOS | 2026-11-17 → 2026-11-24 (+7d) | 2026-11-22 → 2026-11-29 (+7d) |  | -208d → -203d |
| RHD4PRSHLDOSLFS2400 | Delivery for lighting and power panel boards - SHL-DOS | 2026-11-17 → 2026-11-24 (+7d) | 2026-11-22 → 2026-11-29 (+7d) |  | -208d → -203d |
| RHD4PRSHLDOSLFS3000 | Delivery for Fire Alarm System - SHL-DOS | 2026-11-17 → 2026-11-24 (+7d) | 2026-11-22 → 2026-11-29 (+7d) |  | -208d → -203d |
| RHD4PRSHLDOSLFS1300 | Delivery for Fluid-Applied Waterproofing - SHL-DOS | 2026-11-24 → 2026-12-01 (+7d) | 2026-11-29 → 2026-12-06 (+7d) |  | -215d → -210d |
| RHD4PRSHLDOSLFS2300 | Delivery for Motor Control Center (MCC) - SHL-DOS | 2026-11-24 → 2026-12-01 (+7d) | 2026-11-29 → 2026-12-06 (+7d) |  | -215d → -210d |
| RHD4PRSHLDOSLFS2800 | Delivery for Wiring Devices - SHL-DOS | 2026-11-24 → 2026-12-01 (+7d) | 2026-11-29 → 2026-12-06 (+7d) |  | -215d → -210d |
| RHD4PRSHLDOSLFS1000 | Delivery for Metal Ladder and checkered Plate - SHL-DOS | 2026-12-01 → 2026-12-08 (+7d) | 2026-12-06 → 2026-12-13 (+7d) |  | -217.02d → -214d |
| RHD4PRSHLDOSLFS1400 | Delivery for Metal Doors and Access Doors and Frames - SHL-DOS | 2026-12-01 → 2026-12-08 (+7d) | 2026-12-06 → 2026-12-13 (+7d) |  | -222d → -217d |
| RHD4PRSHLDOSLFS2200 | Delivery for wall mounted Split/AC - SHL-DOS | 2026-12-01 → 2026-12-08 (+7d) | 2026-12-06 → 2026-12-13 (+7d) |  | -222d → -217d |
| RHD4PRSHLDOSLFS2900 | Delivery for Enclosed Switches and Circuit Breakers - SHL-DOS | 2026-12-01 → 2026-12-08 (+7d) | 2026-12-06 → 2026-12-13 (+7d) |  | -222d → -217d |
| RHD4PRSHLDOSLFS1500 | Delivery for Painting - SHL-DOS | 2026-12-08 → 2026-12-15 (+7d) | 2026-12-13 → 2026-12-20 (+7d) |  | -229d → -224d |
| RHD4PRSHLDOSLFS2500 | Delivery for Earthing for Lift Stations - SHL-DOS | 2026-12-08 → 2026-12-15 (+7d) | 2026-12-13 → 2026-12-20 (+7d) |  | -229d → -224d |
| RHD4PRSHLDOSLFS3100 | Delivery for Fences and Gates - SHL-DOS | 2026-12-08 → 2026-12-15 (+7d) | 2026-12-13 → 2026-12-20 (+7d) |  | -229d → -224d |
| 1 | **RHD4-02-002-Short Lead Items - SHL-Staging Time - STAG** |  | 2027-02-19 → 2027-02-10 (-9d) |  |  |
| 114 | **RHD4-02-002-SHL-Staging Time - STAG -Storm Network - ST** |  | 2026-11-28 → 2026-12-05 (+7d) |  |  |
| 1 | **RHD4-02-002-SHL-Staging Time - STAG -Storm Network - ST - Zone 1** |  | 2026-11-22 → 2026-11-29 (+7d) |  |  |
| RHD4PRSHLSTAGST1400 | Staging for Grouted Riprap Zone 1 - SHL-STAG | 2026-11-17 → 2026-11-24 (+7d) | 2026-11-22 → 2026-11-29 (+7d) |  | -197.02d → -194d |
| 2 | **RHD4-02-002-SHL-Staging Time - STAG -Storm Network - ST - Zone 2** |  | 2026-11-28 → 2026-12-05 (+7d) |  |  |
| RHD4PRSHLSTAGST1701 | Staging for Metal Works (Stairs - Manhole Covers) Zone 2 - SHL-STAG | 2026-11-16 → 2026-11-23 (+7d) | 2026-11-21 → 2026-11-28 (+7d) |  | -196.02d → -193d |
| RHD4PRSHLSTAGST1401 | Staging for Grouted Riprap Zone 2 - SHL-STAG | 2026-11-23 → 2026-11-30 (+7d) | 2026-11-28 → 2026-12-05 (+7d) |  | -203.02d → -200d |
| 3 | **RHD4-02-002-SHL-Staging Time - STAG -Storm Network - ST - Zone 3** |  | 2026-11-21 → 2026-11-28 (+7d) |  |  |

| ID | Task | Start | Finish | Complete | Total float |
| --- | --- | --- | --- | --- | --- |
| RHD4PRSHLSTAGST1702 | Staging for Metal Works (Stairs - Manhole Covers) Zone 3 - SHL-STAG | 2026-11-16 → 2026-11-23 (+7d) | 2026-11-21 → 2026-11-28 (+7d) |  | -196.02d → -193d |
| 4 | **RHD4-02-002-SHL-Staging Time - STAG -Storm Network - ST - Zone 4** |  | 2026-11-21 → 2026-11-28 (+7d) |  |  |
| RHD4PRSHLSTAGST1703 | Staging for Metal Works (Stairs - Manhole Covers) Zone 4 - SHL-STAG | 2026-11-16 → 2026-11-23 (+7d) | 2026-11-21 → 2026-11-28 (+7d) |  | -196.02d → -193d |
| 7 | **RHD4-02-002-SHL-Staging Time - STAG -Storm Network - ST - Zone 8** |  | 2026-11-21 → 2026-11-28 (+7d) |  |  |
| RHD4PRSHLSTAGST1707 | Staging for Metal Works (Stairs - Manhole Covers) Zone 8 - SHL-STAG | 2026-11-16 → 2026-11-23 (+7d) | 2026-11-21 → 2026-11-28 (+7d) |  | -196.02d → -193d |
| 9 | **RHD4-02-002-SHL-Staging Time - STAG -Storm Network - ST - Zone 9** |  | 2026-11-21 → 2026-11-28 (+7d) |  |  |
| RHD4PRSHLSTAGST1708 | Staging for Metal Works (Stairs - Manhole Covers) Zone 9 - SHL-STAG | 2026-11-16 → 2026-11-23 (+7d) | 2026-11-21 → 2026-11-28 (+7d) |  | -196.02d → -193d |
| 115 | **RHD4-02-002-SHL-Staging Time - STAG -Sewage Network - SW** |  | 2026-12-03 → 2026-12-04 (+1d) |  |  |
| 1 | **RHD4-02-002-SHL-Staging Time - STAG -Sewage Network - SW - Zone 1** |  | 2026-11-26 → 2026-12-03 (+7d) |  |  |
| RHD4PRSHLSTAGSW1400 | Staging for Metal Works (Stairs - Manhole Covers) Zone 1 - SHL-DOS | 2026-11-21 → 2026-11-28 (+7d) | 2026-11-26 → 2026-12-03 (+7d) |  | -201.02d → -198d |
| 2 | **RHD4-02-002-SHL-Staging Time - STAG -Sewage Network - SW - Zone 2** |  | 2026-11-21 → 2026-11-28 (+7d) |  |  |
| RHD4PRSHLSTAGSW1401 | Staging for Metal Works (Stairs - Manhole Covers) Zone 2 - SHL-DOS | 2026-11-16 → 2026-11-23 (+7d) | 2026-11-21 → 2026-11-28 (+7d) |  | -201d → -196d |
| 3 | **RHD4-02-002-SHL-Staging Time - STAG -Sewage Network - SW - Zone 3** |  | 2026-11-27 → 2026-12-04 (+7d) |  |  |
| RHD4PRSHLSTAGSW1402 | Staging for Metal Works (Stairs - Manhole Covers) Zone 3 - SHL-DOS | 2026-11-16 → 2026-11-23 (+7d) | 2026-11-21 → 2026-11-28 (+7d) |  | -196.02d → -193d |
| RHD4PRSHLSTAGSW1202 | Staging for Valves Zone 3 - SHL-DOS | 2026-11-22 → 2026-11-29 (+7d) | 2026-11-27 → 2026-12-04 (+7d) |  | -208.02d → -199d |
| 4 | **RHD4-02-002-SHL-Staging Time - STAG -Sewage Network - SW - Zone 4** |  | 2026-11-27 → 2026-12-04 (+7d) |  |  |
| RHD4PRSHLSTAGSW1203 | Staging for Valves Zone 4 - SHL-DOS | 2026-11-16 → 2026-11-23 (+7d) | 2026-11-21 → 2026-11-28 (+7d) |  | -202.02d → -199d |
| RHD4PRSHLSTAGSW1403 | Staging for Metal Works (Stairs - Manhole Covers) Zone 4 - SHL-DOS | 2026-11-22 → 2026-11-29 (+7d) | 2026-11-27 → 2026-12-04 (+7d) |  | -202.02d → -199d |
| 7 | **RHD4-02-002-SHL-Staging Time - STAG -Sewage Network - SW - Zone 5** |  | 2026-11-20 → 2026-10-15 (-36d) |  |  |
| RHD4PRSHLSTAGSW1504 | Staging for HDPE pipes Zone 5 - SHL-DOS | 2026-11-15 → 2026-09-05 A (-71d) | 2026-11-20 → 2026-09-10 A (-71d) | 0% → 100% | -195.02d → none |
| RHD4PRSHLSTAGSW1404 | Staging for Metal Works (Stairs - Manhole Covers) Zone 5 - SHL-DOS | 2026-11-10 → 2026-10-10 A (-31d) | 2026-11-15 → 2026-10-15 A (-31d) | 0% → 100% | -195d → none |
| 5 | **RHD4-02-002-SHL-Staging Time - STAG -Sewage Network - SW - Zone 6** | 2026-11-16 → 2026-08-23 (-85d) | 2026-11-27 → 2026-09-10 (-78d) |  |  |
| RHD4PRSHLSTAGSW1005 | Staging for UPVC pipes Zone 6 - SHL-DOS | 2026-11-16 → 2026-08-23 A (-85d) | 2026-11-21 → 2026-08-28 A (-85d) | 0% → 100% | -196.02d → none |
| RHD4PRSHLSTAGSW1305 | Staging for Precast Concrete Zone 6 - SHL-DOS | 2026-11-16 → 2026-08-29 A (-79d) | 2026-11-21 → 2026-09-03 A (-79d) | 0% → 100% | -201d → none |
| RHD4PRSHLSTAGSW1405 | Staging for Metal Works (Stairs - Manhole Covers) Zone 6 - SHL-DOS | 2026-11-22 → 2026-09-05 A (-78d) | 2026-11-27 → 2026-09-10 A (-78d) | 0% → 100% | -202.02d → none |
| 8 | **RHD4-02-002-SHL-Staging Time - STAG -Sewage Network - SW - Zone 7** |  | 2026-11-27 → 2026-12-04 (+7d) |  |  |
| RHD4PRSHLSTAGSW1206 | Staging for Valves Zone 7 - SHL-DOS | 2026-11-16 → 2026-11-23 (+7d) | 2026-11-21 → 2026-11-28 (+7d) |  | -208.02d → -199d |
| RHD4PRSHLSTAGSW1306 | Staging for Precast Concrete Zone 7 - SHL-DOS | 2026-11-16 → 2026-11-23 (+7d) | 2026-11-21 → 2026-11-28 (+7d) |  | -196.02d → -193d |
| RHD4PRSHLSTAGSW1506 | Staging for HDPE pipes Zone 7 - SHL-DOS | 2026-11-16 → 2026-11-23 (+7d) | 2026-11-21 → 2026-11-28 (+7d) |  | -202.02d → -193d |
| RHD4PRSHLSTAGSW1406 | Staging for Metal Works (Stairs - Manhole Covers) Zone 7 - SHL-DOS | 2026-11-22 → 2026-11-29 (+7d) | 2026-11-27 → 2026-12-04 (+7d) |  | -202.02d → -199d |
| 6 | **RHD4-02-002-SHL-Staging Time - STAG -Sewage Network - SW - Zone 8** | 2026-11-10 → 2026-08-23 (-79d) | 2026-11-27 → 2026-09-20 (-68d) |  |  |
| RHD4PRSHLSTAGSW1007 | Staging for UPVC pipes Zone 8 - SHL-DOS | 2026-11-22 → 2026-08-23 A (-91d) | 2026-11-27 → 2026-08-28 A (-91d) | 0% → 100% | -202.02d → none |
| RHD4PRSHLSTAGSW1107 | Staging for GRP pipes Zone 8 - SHL-DOS | 2026-11-10 → 2026-09-01 A (-70d) | 2026-11-15 → 2026-09-06 A (-70d) | 0% → 100% | -202.02d → none |
| RHD4PRSHLSTAGSW1307 | Staging for Precast Concrete Zone 8 - SHL-DOS | 2026-11-16 → 2026-09-07 A (-70d) | 2026-11-21 → 2026-09-12 A (-70d) | 0% → 100% | -202.02d → none |
| RHD4PRSHLSTAGSW1407 | Staging for Metal Works (Stairs - Manhole Covers) Zone 8 - SHL-DOS | 2026-11-16 → 2026-09-15 A (-62d) | 2026-11-21 → 2026-09-20 A (-62d) | 0% → 100% | -201d → none |
| 9 | **RHD4-02-002-SHL-Staging Time - STAG -Sewage Network - SW - Zone 9** | 2026-11-16 → 2026-08-25 (-83d) | 2026-12-03 → 2026-11-28 (-5d) |  |  |
| RHD4PRSHLSTAGSW1008 | Staging for UPVC pipes Zone 9 - SHL-DOS | 2026-11-22 → 2026-08-25 A (-89d) | 2026-11-27 → 2026-08-30 A (-89d) | 0% → 100% | -202.02d → none |
| RHD4PRSHLSTAGSW1108 | Staging for GRP pipes Zone 9 - SHL-DOS | 2026-11-28 → 2026-09-01 A (-88d) | 2026-12-03 → 2026-09-06 A (-88d) | 0% → 100% | -208.02d → none |
| RHD4PRSHLSTAGSW1308 | Staging for Precast Concrete Zone 9 - SHL-DOS | 2026-11-16 → 2026-09-01 A (-76d) | 2026-11-21 → 2026-09-06 A (-76d) | 0% → 100% | -201d → none |
| RHD4PRSHLSTAGSW1408 | Staging for Metal Works (Stairs - Manhole Covers) Zone 9 - SHL-DOS | 2026-11-16 → 2026-11-23 (+7d) | 2026-11-21 → 2026-11-28 (+7d) |  | -201d → -196d |
| 116 | **RHD4-02-002-SHL-Staging Time - STAG -Potable Water Network - PT** | 2026-09-07 → 2026-08-08 (-30d) | 2027-01-06 → 2026-12-12 (-25d) |  |  |
| 1 | **RHD4-02-002-SHL-Staging Time - STAG -Potable Water Network - PT - Crossings** | 2026-11-16 → 2026-08-08 (-100d) | 2026-12-03 → 2026-12-10 (+7d) |  |  |
| RHD4PRSHLSTAPTCr1000 | Staging for HDPE pipes - PTCr - SHL-STAG | 2026-11-16 → 2026-08-08 A (-100d) | 2026-11-21 → 2026-08-13 A (-100d) | 0% → 100% | -201d → none |
| RHD4PRSHLSTAPTCr1100 | Staging for Precast Concrete - PTCr - SHL-STAG | 2026-11-22 → 2026-09-07 A (-76d) | 2026-11-27 → 2026-09-12 A (-76d) | 0% → 100% | -214.02d → none |
| RHD4PRSHLSTAPTCr1200 | Staging for Valves - PTCr - SHL-STAG | 2026-11-16 → 2026-11-23 (+7d) | 2026-11-21 → 2026-11-28 (+7d) |  | -214.02d → -205d |
| RHD4PRSHLSTAPTCr1500 | Staging for Fire Hydrants - PTCr - SHL-STAG | 2026-11-22 → 2026-11-29 (+7d) | 2026-11-27 → 2026-12-04 (+7d) |  | -208.02d → -205d |
| RHD4PRSHLSTAPTCr1400 | Staging for Metal Works (Chamber's Covers) - PTCr - SHL-STAG | 2026-11-28 → 2026-11-30 (+2d) | 2026-12-03 → 2026-12-05 (+2d) |  | -214.02d → -206d |
| RHD4PRSHLSTAPTCr1300 | Staging for Stem and Surface box - PTCr - SHL-STAG | 2026-11-28 → 2026-12-05 (+7d) | 2026-12-03 → 2026-12-10 (+7d) |  | -208.02d → -205d |
| 2 | **RHD4-02-002-SHL-Staging Time - STAG -Potable Water Network - PT - Network** |  | 2027-01-06 → 2026-12-12 (-25d) |  |  |
| RHD4PRSHLSTAGPT1300 | Staging for Stem and Surface box - PT - SHL-STAG | 2027-01-01 → 2026-10-28 A (-65d) | 2027-01-06 → 2026-11-02 A (-65d) | 0% → 100% | -235d → none |
| RHD4PRSHLSTAGPT1200 | Staging for Valves - PT - SHL-STAG | 2026-11-16 → 2026-11-23 (+7d) | 2026-11-21 → 2026-11-28 (+7d) |  | -201d → -196d |
| RHD4PRSHLSTAGPT1400 | Staging for Metal Works (Chamber's Covers) - PT - SHL-STAG | 2026-11-23 → 2026-11-30 (+7d) | 2026-11-28 → 2026-12-05 (+7d) |  | -203.02d → -200d |
| RHD4PRSHLSTAGPT1500 | Staging for Fire Hydrants - PT - SHL-STAG | 2026-11-30 → 2026-12-07 (+7d) | 2026-12-05 → 2026-12-12 (+7d) |  | -210.02d → -207d |
| 117 | **RHD4-02-002-SHL-Staging Time - STAG -Irrigation Network - IRR** | 2026-11-16 → 2026-09-01 (-76d) | 2027-01-12 → 2027-01-19 (+7d) |  |  |
| 1 | **RHD4-02-002-SHL-Staging Time - STAG -Irrigation Network - IRR - Crossings** | 2026-11-16 → 2026-09-01 (-76d) | 2026-12-09 → 2026-12-16 (+7d) |  |  |
| RHD4PRSHLSTAIRRC1000 | Staging for HDPE pipes - IRRC - SHL-STAG | 2026-11-16 → 2026-09-01 A (-76d) | 2026-11-21 → 2026-09-06 A (-76d) | 0% → 100% | -201d → none |
| RHD4PRSHLSTAIRRC1100 | Staging for Valves - IRRC - SHL-STAG | 2026-11-16 → 2026-11-23 (+7d) | 2026-11-21 → 2026-11-28 (+7d) |  | -220.02d → -217d |
| RHD4PRSHLSTAIRRC1200 | Staging for Precast Concrete - IRRC - SHL-STAG | 2026-11-22 → 2026-11-29 (+7d) | 2026-11-27 → 2026-12-04 (+7d) |  | -220.02d → -217d |
| RHD4PRSHLSTAIRRC1300 | Staging for Stem and Surface box - IRRC - SHL-STAG | 2026-11-28 → 2026-12-05 (+7d) | 2026-12-03 → 2026-12-10 (+7d) |  | -220.02d → -217d |
| RHD4PRSHLSTAIRRC1400 | Staging for Metal Works (Chamber's Covers) - IRRC - SHL-STAG | 2026-12-04 → 2026-12-11 (+7d) | 2026-12-09 → 2026-12-16 (+7d) |  | -220.02d → -217d |
| 2 | **RHD4-02-002-SHL-Staging Time - STAG -Irrigation Network - IRR - Network** | 2026-11-16 → 2026-09-01 (-76d) | 2027-01-12 → 2027-01-19 (+7d) |  |  |
| RHD4PRSHLSTAGIRR1000 | Staging for HDPE pipes - IRR - SHL-STAG | 2026-11-16 → 2026-09-01 A (-76d) | 2026-11-21 → 2026-09-06 A (-76d) | 0% → 100% | -201d → none |
| RHD4PRSHLSTAGIRR1100 | Staging for Valves - IRR - SHL-STAG | 2026-11-16 → 2026-11-23 (+7d) | 2026-11-21 → 2026-11-28 (+7d) |  | -196.02d → -193d |
| RHD4PRSHLSTAGIRR1200 | Staging for Precast Concrete - IRR - SHL-STAG | 2026-11-22 → 2026-11-23 (+1d) | 2026-11-27 → 2026-11-28 (+1d) |  | -202.02d → -193d |
| RHD4PRSHLSTAGIRR1300 | Staging for Stem and Surface box - IRR - SHL-STAG | 2027-01-01 → 2027-01-08 (+7d) | 2027-01-06 → 2027-01-13 (+7d) |  | -227d → -222d |
| RHD4PRSHLSTAGIRR1400 | Staging for Metal Works (Chamber's Covers) - IRR - SHL-STAG | 2027-01-07 → 2027-01-14 (+7d) | 2027-01-12 → 2027-01-19 (+7d) |  | -233d → -228d |
| 118 | **RHD4-02-002-SHL-Staging Time - STAG -Medium Voltage - MV** | 2026-11-16 → 2026-11-23 (+7d) | 2026-12-19 → 2026-12-26 (+7d) |  |  |
| RHD4PRSHLSTAGMV1000 | Staging for UPVC Pipes for Duct Banks - SHL-STAG | 2026-11-16 → 2026-11-23 (+7d) | 2026-11-21 → 2026-11-28 (+7d) |  | -201d → -196d |
| RHD4PRSHLSTAGMV1100 | Staging for Medium Voltage Cable 3Cx500 mm2 - SHL-STAG | 2026-12-14 → 2026-12-21 (+7d) | 2026-12-19 → 2026-12-26 (+7d) |  | -229d → -224d |
| RHD4PRSHLSTAGMV1200 | Staging for Medium Voltage Cable 3Cx50 mm2 - SHL-STAG | 2026-12-14 → 2026-12-21 (+7d) | 2026-12-19 → 2026-12-26 (+7d) |  | -229d → -224d |

| ID | Task | Start | Finish | Complete | Total float |
| --- | --- | --- | --- | --- | --- |
| RHD4PRSHLSTAGMV1300 | Staging for Straight Joints 3Cx50 mm2 - SHL-STAG | 2026-12-14 → 2026-12-21 (+7d) | 2026-12-19 → 2026-12-26 (+7d) |  | -229d → -224d |
| RHD4PRSHLSTAGMV1400 | Staging for Normally Open Points (Outdoor type) - SHL-STAG | 2026-12-14 → 2026-12-21 (+7d) | 2026-12-19 → 2026-12-26 (+7d) |  | -229d → -224d |
| 119 | **RHD4-02-002-SHL-Staging Time - STAG -Low Voltage - LV** | 2026-11-16 → 2026-11-23 (+7d) | 2027-01-17 → 2027-01-19 (+2d) |  |  |
| RHD4PRSHLSTAGLV1000 | Staging for UPVC Pipes for Duct Banks - SHL-STAG | 2026-11-16 → 2026-11-23 (+7d) | 2026-11-21 → 2026-11-28 (+7d) |  | -201d → -196d |
| RHD4PRSHLSTAGLV1100 | Staging for Low voltage Cables - SHL-STAG | 2026-11-16 → 2026-11-23 (+7d) | 2026-11-21 → 2026-11-28 (+7d) |  | -201d → -196d |
| RHD4PRSHLSTAGLV1200 | Staging for Distribution Pillars - SHL-STAG | 2026-12-07 → 2026-12-14 (+7d) | 2026-12-12 → 2026-12-19 (+7d) |  | -222d → -217d |
| RHD4PRSHLSTAGLV1300 | Staging for KWH Meter mounting Frame - SHL-STAG | 2026-12-07 → 2026-12-14 (+7d) | 2026-12-12 → 2026-12-19 (+7d) |  | -222d → -217d |
| RHD4PRSHLSTAGLV1500 | Staging for Earthing for Pillars and Panels - SHL-STAG | 2026-12-07 → 2026-12-14 (+7d) | 2026-12-12 → 2026-12-19 (+7d) |  | -217.02d → -214d |
| RHD4PRSHLSTAGLV1400 | Staging for Low Voltage Drawpit - SHL-STAG | 2027-01-11 → 2027-01-14 (+3d) | 2027-01-17 → 2027-01-19 (+2d) |  | -231.02d → -228d |
| 120 | **RHD4-02-002-SHL-Staging Time - STAG -Street Lighting Network -SL** |  | 2027-01-23 → 2026-11-15 (-69d) |  |  |
| RHD4PRSHLSTAGSL1100 | Staging for Street Lighting Cables - SHL-STAG | 2027-01-17 → 2026-11-14 A (-64d) | 2027-01-23 → 2026-11-15 A (-69d) | 0% → 100% | -229.02d → none |
| 121 | **RHD4-02-002-SHL-Staging Time - STAG -Landscape Network - LS** | 2026-11-10 → 2026-11-17 (+7d) | 2026-11-15 → 2026-11-22 (+7d) |  |  |
| RHD4PRSHLSTAGLS1000 | Staging for Landscape Lighting (Bollard) - SHL-STAG | 2026-11-10 → 2026-11-17 (+7d) | 2026-11-15 → 2026-11-22 (+7d) |  | -195d → -190d |
| 122 | **RHD4-02-002-SHL-Staging Time - STAG -Telecommunications Network - TC** |  | 2027-02-07 → 2027-02-08 (+1d) |  |  |
| RHD4PRSHLSTAGTC1100 | Staging for HDPE Road Crossings Ducts - SHL-STAG | 2027-01-17 → 2027-01-14 (-3d) | 2027-01-23 → 2027-01-19 (-4d) |  | -213.02d → -210d |
| RHD4PRSHLSTAGTC1200 | Staging for Telecommunications Manhole - SHL-STAG | 2027-02-02 → 2027-02-03 (+1d) | 2027-02-07 → 2027-02-08 (+1d) |  | -93d → -94d |
| 123 | **RHD4-02-002-SHL-Staging Time - STAG -Information and Communication Technologies - ICT** | 2026-11-16 → 2026-09-13 (-64d) | 2027-02-19 → 2027-02-10 (-9d) |  |  |
| RHD4PRSHLSTAGICT1100 | Staging for HDPE Road Crossings Ducts - SHL-STAG | 2027-02-08 → 2026-09-13 A (-148d) | 2027-02-13 → 2026-09-18 A (-148d) | 0% → 100% | -232d → none |
| RHD4PRSHLSTAGICT1200 | Staging for Telecommunications Manhole - SHL-STAG | 2026-11-16 → 2026-11-23 (+7d) | 2026-11-21 → 2026-11-28 (+7d) |  | -196.02d → -193d |
| RHD4PRSHLSTAGICT1000 | Staging for HDPE Ducts - SHL-STAG | 2027-02-14 → 2027-02-05 (-9d) | 2027-02-19 → 2027-02-10 (-9d) |  | -201d → -192d |
| 124 | **RHD4-02-002-SHL-Staging Time - STAG -Security Network - CCTV** | 2026-11-30 → 2026-12-07 (+7d) | 2026-12-26 → 2027-01-02 (+7d) |  |  |
| RHD4PRSHLSTACCTV1000 | Staging for CCTV Network Poles - SHL-STAG | 2026-11-30 → 2026-12-07 (+7d) | 2026-12-05 → 2026-12-12 (+7d) |  | -210.02d → -207d |
| RHD4PRSHLSTACCTV1200 | Staging for CCTV Panels and Panel's Components - SHL-STAG | 2026-12-07 → 2026-12-14 (+7d) | 2026-12-12 → 2026-12-19 (+7d) |  | -217.02d → -214d |
| RHD4PRSHLSTACCTV1300 | Staging for CCTV Fiber Optic Cables - SHL-STAG | 2026-12-14 → 2026-12-21 (+7d) | 2026-12-19 → 2026-12-26 (+7d) |  | -224.02d → -221d |
| RHD4PRSHLSTACCTV1100 | Staging for CCTV Network Cameras - SHL-STAG | 2026-12-21 → 2026-12-28 (+7d) | 2026-12-26 → 2027-01-02 (+7d) |  | -231.02d → -228d |
| 125 | **RHD4-02-002-SHL-Staging Time - STAG -Road Works - RD** | 2026-11-16 → 2026-09-02 (-75d) | 2026-12-19 → 2026-12-26 (+7d) |  |  |
| RHD4PRSHLSTAGRD1000 | Staging for Aggregate Base Courses - SHL-STAG | 2026-11-16 → 2026-09-02 A (-75d) | 2026-11-21 → 2026-09-07 A (-75d) | 0% → 100% | -201d → none |
| RHD4PRSHLSTAGRD1100 | Staging for Bituminous Asphalt Layers - SHL-STAG | 2026-11-16 → 2026-09-08 A (-69d) | 2026-11-21 → 2026-09-13 A (-69d) | 0% → 100% | -201d → none |
| RHD4PRSHLSTAGRD1200 | Staging for Precast Concrete Curbstone - SHL-STAG | 2026-11-16 → 2026-11-12 A (-4d) | 2026-11-21 → 2026-11-14 A (-7d) | 0% → 100% | -201d → none |
| RHD4PRSHLSTAGRD1600 | Staging for Traffic Signage - SHL-STAG | 2026-11-23 → 2026-11-30 (+7d) | 2026-11-28 → 2026-12-05 (+7d) |  | -208d → -203d |
| RHD4PRSHLSTAGRD1300 | Staging for Interlock Precast Concrete Unit Paving - SHL-STAG | 2026-11-30 → 2026-12-07 (+7d) | 2026-12-05 → 2026-12-12 (+7d) |  | -210.02d → -207d |
| RHD4PRSHLSTAGRD1400 | Staging for Wheel Stopper - SHL-STAG | 2026-12-07 → 2026-12-14 (+7d) | 2026-12-12 → 2026-12-19 (+7d) |  | -217.02d → -214d |
| RHD4PRSHLSTAGRD1500 | Staging for Pavement Marking - SHL-STAG | 2026-12-14 → 2026-12-21 (+7d) | 2026-12-19 → 2026-12-26 (+7d) |  | -224.02d → -221d |
| 1 | **RHD4-02-002-SHL-Staging Time - STAG -Lift Stations - LFS** | 2026-11-16 → 2026-11-23 (+7d) | 2026-12-19 → 2026-12-26 (+7d) |  |  |
| RHD4PRSHLSTAGLFS1700 | Staging Time for Ductile Iron Pipes & Fittings - SHL-STAG | 2026-11-16 → 2026-11-23 (+7d) | 2026-11-21 → 2026-11-28 (+7d) |  | -201d → -196d |
| RHD4PRSHLSTAGLFS1800 | Staging Time for Sewage Lift Station Valves - SHL-STAG | 2026-11-16 → 2026-11-23 (+7d) | 2026-11-21 → 2026-11-28 (+7d) |  | -201d → -196d |
| RHD4PRSHLSTAGLFS1900 | Staging Time for Basket screen - SHL-STAG | 2026-11-16 → 2026-11-23 (+7d) | 2026-11-21 → 2026-11-28 (+7d) |  | -201d → -196d |
| RHD4PRSHLSTAGLFS2600 | Staging Time for Low Voltage Cables - SHL-STAG | 2026-11-16 → 2026-11-23 (+7d) | 2026-11-21 → 2026-11-28 (+7d) |  | -201d → -196d |
| RHD4PRSHLSTAGLFS2700 | Staging Time for Lighting Fixtures - SHL-STAG | 2026-11-16 → 2026-11-23 (+7d) | 2026-11-21 → 2026-11-28 (+7d) |  | -196.02d → -193d |
| RHD4PRSHLSTAGLFS1100 | Staging Time for Roof Waterproofing System - SHL-STAG | 2026-11-23 → 2026-11-30 (+7d) | 2026-11-28 → 2026-12-05 (+7d) |  | -208d → -203d |
| RHD4PRSHLSTAGLFS1200 | Staging Time for Bituminous Sheet Waterproofing - SHL-STAG | 2026-11-23 → 2026-11-30 (+7d) | 2026-11-28 → 2026-12-05 (+7d) |  | -208d → -203d |
| RHD4PRSHLSTAGLFS1600 | Staging Time for Epoxy Coating - SHL-STAG | 2026-11-23 → 2026-11-30 (+7d) | 2026-11-28 → 2026-12-05 (+7d) |  | -208d → -203d |
| RHD4PRSHLSTAGLFS2100 | Staging Time for UPVC Pipes for Sanitary Drain - SHL-STAG | 2026-11-23 → 2026-11-30 (+7d) | 2026-11-28 → 2026-12-05 (+7d) |  | -208d → -203d |
| RHD4PRSHLSTAGLFS2400 | Staging Time for lighting and power panel boards - SHL-STAG | 2026-11-23 → 2026-11-30 (+7d) | 2026-11-28 → 2026-12-05 (+7d) |  | -208d → -203d |
| RHD4PRSHLSTAGLFS3000 | Staging Time for Fire Alarm System - SHL-STAG | 2026-11-23 → 2026-11-30 (+7d) | 2026-11-28 → 2026-12-05 (+7d) |  | -208d → -203d |
| RHD4PRSHLSTAGLFS1300 | Staging Time for Fluid-Applied Waterproofing - SHL-STAG | 2026-11-30 → 2026-12-07 (+7d) | 2026-12-05 → 2026-12-12 (+7d) |  | -215d → -210d |
| RHD4PRSHLSTAGLFS2300 | Staging Time for Motor Control Center (MCC) - SHL-STAG | 2026-11-30 → 2026-12-07 (+7d) | 2026-12-05 → 2026-12-12 (+7d) |  | -215d → -210d |
| RHD4PRSHLSTAGLFS2800 | Staging Time for Wiring Devices - SHL-STAG | 2026-11-30 → 2026-12-07 (+7d) | 2026-12-05 → 2026-12-12 (+7d) |  | -215d → -210d |
| RHD4PRSHLSTAGLFS1000 | Staging Time for Metal Ladder and checkered Plate - SHL-STAG | 2026-12-07 → 2026-12-14 (+7d) | 2026-12-12 → 2026-12-19 (+7d) |  | -217.02d → -214d |
| RHD4PRSHLSTAGLFS1400 | Staging Time for Metal Doors and Access Doors and Frames - SHL-STAG | 2026-12-07 → 2026-12-14 (+7d) | 2026-12-12 → 2026-12-19 (+7d) |  | -222d → -217d |
| RHD4PRSHLSTAGLFS2200 | Staging Time for wall mounted Split/AC - SHL-STAG | 2026-12-07 → 2026-12-14 (+7d) | 2026-12-12 → 2026-12-19 (+7d) |  | -222d → -217d |
| RHD4PRSHLSTAGLFS2900 | Staging Time for Enclosed Switches and Circuit Breakers - SHL-STAG | 2026-12-07 → 2026-12-14 (+7d) | 2026-12-12 → 2026-12-19 (+7d) |  | -222d → -217d |
| RHD4PRSHLSTAGLFS1500 | Staging Time for Painting - SHL-STAG | 2026-12-14 → 2026-12-21 (+7d) | 2026-12-19 → 2026-12-26 (+7d) |  | -229d → -224d |
| RHD4PRSHLSTAGLFS2500 | Staging Time for Earthing for Lift Stations - SHL-STAG | 2026-12-14 → 2026-12-21 (+7d) | 2026-12-19 → 2026-12-26 (+7d) |  | -229d → -224d |
| RHD4PRSHLSTAGLFS3100 | Staging Time for Fences and Gates - SHL-STAG | 2026-12-14 → 2026-12-21 (+7d) | 2026-12-19 → 2026-12-26 (+7d) |  | -229d → -224d |
| 137 | **RHD4-02-002-Construction** |  | 2028-11-02 → 2028-10-28 (-5d) |  |  |
| 138 | **Demolition - DM** |  | 2028-03-21 → 2028-03-22 (+1d) |  |  |
| 139 | **RHD4-02-002-Demolition - DM** |  | 2028-03-21 → 2028-03-22 (+1d) |  |  |
| 148 | **Z3** |  | 2028-01-02 → 2028-01-03 (+1d) |  |  |
| 150 | **RHD4-02-002-Demolition - DM-Z3-(RD-C-8 /3)** |  | 2028-01-02 → 2028-01-03 (+1d) |  |  |
| RHD4CZ3C083DM1200 | Removal of Trees for Road (RD-C-8 /3) - (B1.02 41 00.03)-Z3-C083-DM |  | 2028-01-02 → 2028-01-03 (+1d) |  | -82d → -83d |
| RHD4CZ3C083DM1000 | Removal of curbstone for Road (RD-C-8 /3) - (B1.02 41 00.01)-Z3-C083-DM | 2027-11-17 → 2027-11-18 (+1d) | 2027-11-20 → 2027-11-21 (+1d) |  | -82d → -83d |
| RHD4CZ3C083DM1100 | Removal of sidewalk for Road (RD-C-8 /3) - (B1.02 41 00.02)-Z3-C083-DM | 2027-11-21 → 2027-11-22 (+1d) | 2027-11-30 → 2027-12-01 (+1d) |  | -82d → -83d |
| RHD4CZ3C083DM1300 | Removal of existing New Jersy for Road (RD-C-8 /3) - (B1.02 41 00.04)-Z3-C083-DM | 2027-12-01 → 2027-12-02 (+1d) | 2027-12-02 → 2027-12-04 (+2d) |  | -82d → -83d |
| RHD4CZ3C083DM1400 | Relocation of existing Electrical cable for Road (RD-C-8 /3) - (B1.02 41 00.09)-Z3-C083-DM | 2027-12-04 → 2027-12-05 (+1d) | 2027-12-11 → 2027-12-12 (+1d) |  | -82d → -83d |
| RHD4CZ3C083DM1500 | Relocation of existing Electrical manhole for Road (RD-C-8 /3) - (B1.02 41 00.10)-Z3-C083-DM | 2027-12-12 → 2027-12-13 (+1d) | 2027-12-14 → 2027-12-15 (+1d) |  | -82d → -83d |
| RHD4CZ3C083DM1600 | Relocation of existing Sewer manholes for Road (RD-C-8 /3) - (B1.02 41 00.11)-Z3-C083-DM | 2027-12-15 → 2027-12-16 (+1d) | 2027-12-16 → 2027-12-18 (+2d) |  | -82d → -83d |
| RHD4CZ3C083DM1700 | Relocation of existing Storm manholes for Road (RD-C-8 /3) - (B1.02 41 00.12)-Z3-C083-DM | 2027-12-18 → 2027-12-19 (+1d) | 2027-12-19 → 2027-12-20 (+1d) |  | -82d → -83d |
| RHD4CZ3C083DM1800 | Relocation of existing Waterline for Road (RD-C-8 /3) - (B1.02 41 00.13)-Z3-C083-DM | 2027-12-20 → 2027-12-21 (+1d) | 2027-12-26 → 2027-12-27 (+1d) |  | -82d → -83d |
| RHD4CZ3C083DM2000 | Relocation of existing Medium tension Pole for Road (RD-C-8 /3) - (B1.02 41 00.15)-Z3-C083-DM | 2027-12-27 → 2027-12-28 (+1d) | 2027-12-30 → 2028-01-01 (+2d) |  | -82d → -83d |

| ID | Task | Start | Finish | Complete | Total float |
| --- | --- | --- | --- | --- | --- |
| 143 | **Z2** | 2028-01-03 → 2028-01-04 (+1d) | 2028-02-05 → 2028-02-06 (+1d) |  |  |
| 144 | **RHD4-02-002-Demolition - DM-Z2-(RD-C-8 /2)** | 2028-01-03 → 2028-01-04 (+1d) | 2028-02-05 → 2028-02-06 (+1d) |  |  |
| RHD4CZ2C082DM1000 | Removal of curbstone for Road (RD-C-8 /2) - (B1.02 41 00.01)-Z2-C082-DM | 2028-01-03 → 2028-01-04 (+1d) | 2028-01-06 → 2028-01-08 (+2d) |  | -82d → -83d |
| RHD4CZ2C082DM1100 | Removal of sidewalk for Road (RD-C-8 /2) - (B1.02 41 00.02)-Z2-C082-DM | 2028-01-08 → 2028-01-09 (+1d) | 2028-01-16 → 2028-01-17 (+1d) |  | -82d → -83d |
| RHD4CZ2C082DM1300 | Removal of existing New Jersy for Road (RD-C-8 /2) - (B1.02 41 00.04)-Z2-C082-DM | 2028-01-17 → 2028-01-18 (+1d) | 2028-01-18 → 2028-01-19 (+1d) |  | -82d → -83d |
| RHD4CZ2C082DM1500 | Relocation of existing Electrical manhole for Road (RD-C-8 /2) - (B1.02 41 00.10)-Z2-C082-DM | 2028-01-19 → 2028-01-20 (+1d) | 2028-01-22 → 2028-01-23 (+1d) |  | -82d → -83d |
| RHD4CZ2C082DM1800 | Relocation of existing Waterline for Road (RD-C-8 /2) - (B1.02 41 00.13)-Z2-C082-DM | 2028-01-23 → 2028-01-24 (+1d) | 2028-02-05 → 2028-02-06 (+1d) |  | -82d → -83d |
| 140 | **Z1** | 2028-02-06 → 2028-02-07 (+1d) | 2028-03-21 → 2028-03-22 (+1d) |  |  |
| 141 | **RHD4-02-002-Demolition - DM-Z1-(RD-C-8 /1)** | 2028-02-06 → 2028-02-07 (+1d) | 2028-03-21 → 2028-03-22 (+1d) |  |  |
| RHD4CZ1C081DM1000 | Removal of curbstone for Road (RD-C-8 /1) - (B1.02 41 00.01)-Z1-C081-DM | 2028-02-06 → 2028-02-07 (+1d) | 2028-02-10 → 2028-02-12 (+2d) |  | -82d → -83d |
| RHD4CZ1C081DM1100 | Removal of sidewalk for Road (RD-C-8 /1) - (B1.02 41 00.02)-Z1-C081-DM | 2028-02-12 → 2028-02-13 (+1d) | 2028-02-20 → 2028-02-21 (+1d) |  | -82d → -83d |
| RHD4CZ1C081DM1300 | Removal of existing New Jersy for Road (RD-C-8 /1) - (B1.02 41 00.04)-Z1-C081-DM | 2028-02-21 → 2028-02-23 (+2d) | 2028-02-26 → 2028-03-01 (+4d) |  | -82d → -83d |
| RHD4CZ1C081DM1600 | Relocation of existing Sewer manholes for Road (RD-C-8 /1) - (B1.02 41 00.11)-Z1-C081-DM | 2028-03-01 → 2028-03-02 (+1d) | 2028-03-02 → 2028-03-04 (+2d) |  | -82d → -83d |
| RHD4CZ1C081DM1800 | Relocation of existing Waterline for Road (RD-C-8 /1) - (B1.02 41 00.13)-Z1-C081-DM | 2028-03-04 → 2028-03-05 (+1d) | 2028-03-15 → 2028-03-16 (+1d) |  | -82d → -83d |
| RHD4CZ1C081DM1900 | Relocation of existing light poles for Road (RD-C-8 /1) - (B1.02 41 00.14)-Z1-C081-DM | 2028-03-16 → 2028-03-18 (+2d) | 2028-03-18 → 2028-03-19 (+1d) |  | -82d → -83d |
| RHD4CZ1C081DM2000 | Relocation of existing Medium tension Pole for Road (RD-C-8 /1) - (B1.02 41 00.15)-Z1-C081-DM | 2028-03-19 → 2028-03-20 (+1d) | 2028-03-21 → 2028-03-22 (+1d) |  | -82d → -83d |
| 152 | **Earthworks - EW** |  | 2028-02-10 → 2028-02-08 (-2d) |  |  |
| 153 | **RHD4-02-002-Block Works-EX** |  | 2027-08-16 → 2027-08-15 (-1d) |  |  |
| 175 | **RHD4-02-002-Z6-Block Wokrs - Excavation** |  | 2027-02-28 → 2027-02-23 (-5d) |  |  |
| 178 | **RHD4-02-002-Block Works-EX-Z6-BLOCK-17** |  | 2027-02-28 → 2027-02-23 (-5d) |  |  |
| RHD4CZ6B17EX1002 | Excavation works for Block 17 - Stage 3 - (B1.31 23 16.01)-Z6-B17-EX(Completed) |  | 2027-02-28 → 2027-02-23 (-5d) | 87% → 24% | -146.02d → -143d |
| 169 | **RHD4-02-002-Z5-Block Wokrs - Excavation** |  | 2027-06-26 → 2027-06-24 (-2d) |  |  |
| 170 | **RHD4-02-002-Block Works-EX-Z5-BLOCK-10** |  | 2027-06-22 → 2027-06-20 (-2d) |  |  |
| RHD4CZ5B10EX1001 | Excavation works for Block 10 - Stage 2 - (B1.31 23 16.01)-Z5-B10-EX |  | 2027-06-22 → 2027-06-20 (-2d) | 52% → 77% | -101.96d → -100.95d |
| 172 | **RHD4-02-002-Block Works-EX-Z5-BLOCK-12** |  | 2027-06-26 → 2027-06-24 (-2d) |  |  |
| RHD4CZ5B12EX1003 | Excavation works for Block 12 - Stage 4 - (B1.31 23 16.01)-Z5-B12-EX |  | 2027-06-26 → 2027-06-24 (-2d) |  | -101.96d → -100.95d |
| 188 | **RHD4-02-002-Z8-Block Wokrs - Excavation** |  | 2027-08-16 → 2027-08-15 (-1d) |  |  |
| 193 | **RHD4-02-002-Block Works-EX-Z8-BLOCK-29** | 2027-06-26 → 2027-06-24 (-2d) | 2027-07-06 → 2027-07-05 (-1d) |  |  |
| RHD4CZ8B29EX1000 | Excavation works for Block 29 - (B1.31 23 16.01)-Z8-B29-EX | 2027-06-26 → 2027-06-24 (-2d) | 2027-07-06 → 2027-07-05 (-1d) |  | -98.96d → -97.95d |
| 192 | **RHD4-02-002-Block Works-EX-Z8-BLOCK-28** | 2027-07-06 → 2027-07-05 (-1d) | 2027-07-31 → 2027-07-29 (-2d) |  |  |
| RHD4CZ8B28EX1000 | Excavation works for Block 28 - (B1.31 23 16.01)-Z8-B28-EX | 2027-07-06 → 2027-07-05 (-1d) | 2027-07-31 → 2027-07-29 (-2d) |  | -98.96d → -97.95d |
| 191 | **RHD4-02-002-Block Works-EX-Z8-BLOCK-27** | 2027-07-31 → 2027-07-29 (-2d) | 2027-08-09 → 2027-08-08 (-1d) |  |  |
| RHD4CZ8B27EX1000 | Excavation works for Block 27 - (B1.31 23 16.01)-Z8-B27-EX | 2027-07-31 → 2027-07-29 (-2d) | 2027-08-09 → 2027-08-08 (-1d) |  | -98.96d → -97.95d |
| 190 | **RHD4-02-002-Block Works-EX-Z8-BLOCK-26** | 2027-08-09 → 2027-08-08 (-1d) | 2027-08-16 → 2027-08-15 (-1d) |  |  |
| RHD4CZ8B26EX1000 | Excavation works for Block 26 - (B1.31 23 16.01)-Z8-B26-EX | 2027-08-09 → 2027-08-08 (-1d) | 2027-08-16 → 2027-08-15 (-1d) |  | -98.96d → -97.95d |
| 180 | **RHD4-02-002-Z7-Block Wokrs - Excavation** |  | 2027-06-30 → 2027-06-29 (-1d) |  |  |
| 184 | **RHD4-02-002-Block Works-EX-Z7-BLOCK-21** | 2027-06-26 → 2027-06-24 (-2d) | 2027-06-30 → 2027-06-29 (-1d) |  |  |
| RHD4CZ7B21EX1000 | Excavation works for Block 21 - Stage 1 - (B1.31 23 16.01)-Z7-B21-EX | 2027-06-26 → 2027-06-24 (-2d) | 2027-06-28 → 2027-06-27 (-1d) |  | 8.04d → 9.05d |
| RHD4CZ7B21EX1001 | Excavation works for Block 21 - stage 2 - (B1.31 23 16.01)-Z7-B21-EX | 2027-06-28 → 2027-06-27 (-1d) | 2027-06-30 → 2027-06-29 (-1d) |  | 8.04d → 9.05d |
| 186 | **RHD4-02-002-Block Works-EX-Z7-BLOCK-23** |  | 2027-06-28 → 2027-06-27 (-1d) |  |  |
| RHD4CZ7B23EX1000 | Excavation works for Block 23 - (B1.31 23 16.01)-Z7-B23-EX |  | 2027-06-28 → 2027-06-27 (-1d) |  | -76.85d → -75.83d |
| 194 | **RHD4-02-002-Z9-Block Wokrs - Excavation** |  | 2027-07-07 → 2027-07-13 (+6d) |  |  |
| 195 | **RHD4-02-002-Block Works-EX-Z9-BLOCK-30** | 2027-06-22 → 2027-06-21 (-1d) | 2027-07-03 → 2027-06-30 (-3d) |  |  |
| RHD4CZ9B30EX1000 | Excavation works for Block 30 - (B1.31 23 16.01)-Z9-B30-EX | 2027-06-22 → 2027-06-21 (-1d) | 2027-07-03 → 2027-06-30 (-3d) |  | -42.02d → -41d |
| 199 | **RHD4-02-002-Block Works-EX-Z9-BLOCK-34** |  | 2027-06-22 → 2027-07-08 (+16d) |  |  |
| RHD4CZ9B34EX1000 | Excavation works for Block 34 - (B1.31 23 16.01)-Z9-B34-EX(Completed) |  | 2027-06-22 → 2027-07-08 (+16d) |  | -92.02d → -91d |
| 201 | **RHD4-02-002-Block Works-EX-Z9-BLOCK-36** | 2027-07-03 → 2027-07-08 (+5d) | 2027-07-07 → 2027-07-13 (+6d) |  |  |
| RHD4CZ9B36EX1000 | Excavation works for Block 36 - (B1.31 23 16.01)-Z9-B36-EX | 2027-07-03 → 2027-07-08 (+5d) | 2027-07-07 → 2027-07-13 (+6d) |  | -42.02d → -47.64d |
| 163 | **RHD4-02-002-Z4-Block Wokrs - Excavation** |  | 2027-08-09 → 2027-08-07 (-2d) |  |  |
| 166 | **RHD4-02-002-Block Works-EX-Z4-BLOCK-08** |  | 2027-07-25 → 2027-07-22 (-3d) |  |  |
| RHD4CZ4B08EX1000 | Excavation works for Block 08 - Stage 1 - (B1.31 23 16.01)-Z4-B08-EX |  | 2027-06-30 → 2027-06-28 (-2d) |  | -91.02d → -90d |
| RHD4CZ4B08EX1001 | Excavation works for Block 08 - Stage 2 - (B1.31 23 16.01)-Z4-B08-EX | 2027-06-30 → 2027-06-29 (-1d) | 2027-07-25 → 2027-07-22 (-3d) |  | -91.02d → -90d |
| 165 | **RHD4-02-002-Block Works-EX-Z4-BLOCK-07** |  | 2027-07-17 → 2027-07-14 (-3d) |  |  |
| RHD4CZ4B07EX1001 | Excavation works for Block 07 - Stage 2 - (B1.31 23 16.01)-Z4-B07-EX | 2027-06-22 → 2027-06-21 (-1d) | 2027-07-17 → 2027-07-14 (-3d) |  | -68.02d → -67d |
| 164 | **RHD4-02-002-Block Works-EX-Z4-BLOCK-06** | 2027-06-22 → 2027-06-21 (-1d) | 2027-08-09 → 2027-08-07 (-2d) |  |  |
| RHD4CZ4B06EX1000 | Excavation works for Block 06 - Stage 1 - (B1.31 23 16.01)-Z4-B06-EX(Completed) | 2027-06-22 → 2027-06-21 (-1d) | 2027-07-15 → 2027-07-13 (-2d) |  | -92.02d → -91d |
| RHD4CZ4B06EX1001 | Excavation works for Block 06 - Stage 2 - (B1.31 23 16.01)-Z4-B06-EX | 2027-07-15 → 2027-07-14 (-1d) | 2027-08-09 → 2027-08-07 (-2d) |  | -92.02d → -91d |
| 168 | **RHD4-02-002-Block Works-EX-Z4-BLOCK-Z4** |  | 2027-08-01 → 2027-07-31 (-1d) |  |  |
| RHD4CZ4BZ4EX1000 | Excavation works for Block BZ4 - Stage 1 - (B1.31 23 16.01)-Z4-BZ4-EX |  | 2027-07-07 → 2027-07-06 (-1d) |  | -101.96d → -100.95d |
| RHD4CZ4BZ4EX1001 | Excavation works for Block BZ4 - Stage 2 - (B1.31 23 16.01)-Z4-BZ4-EX | 2027-07-07 → 2027-07-06 (-1d) | 2027-08-01 → 2027-07-31 (-1d) |  | -101.96d → -100.95d |
| 154 | **RHD4-02-002-Z1-Block Wokrs - Excavation** |  | 2027-07-04 → 2027-07-01 (-3d) |  |  |
| 155 | **RHD4-02-002-Block Works-EX-Z1-BLOCK-01** |  | 2027-07-04 → 2027-07-01 (-3d) |  |  |
| RHD4CZ1B01EX1000 | Excavation works for Block 01 - (B1.31 23 16.01)-Z1-B01-EX |  | 2027-07-04 → 2027-07-01 (-3d) |  | -79.02d → -78d |
| 202 | **RHD4-02-002-Block Works - BF** |  | 2027-09-28 → 2027-09-27 (-1d) |  |  |
| 224 | **RHD4-02-002-Z6-Block Works - Backfill** |  | 2027-06-23 → 2027-06-22 (-1d) |  |  |
| 227 | **RHD4-02-002-Block Works - BF-Z6-BLOCK-17** |  | 2027-06-23 → 2027-06-22 (-1d) |  |  |
| RHD4CZ6B17BF2000 | Backfill Layers works Using Dynamic Compaction Crane (RIC) for Block 17 - (B1.31 23 23.03)-Z6-B17-BF(Completed) |  | 2027-06-23 → 2027-06-22 (-1d) |  | -59.71d → -58.69d |
| 237 | **RHD4-02-002-Z8-Block Works - Backfill** |  | 2027-09-28 → 2027-09-27 (-1d) |  |  |
| 238 | **RHD4-02-002-Block Works - BF-Z8-BLOCK-25** |  | 2027-07-12 → 2027-07-10 (-2d) |  |  |
| RHD4CZ8B25BF2000 | Backfill Layers works Using Dynamic Compaction Crane (RIC) for Block 25 - (B1.31 23 23.03)-Z8-B25-BF |  | 2027-07-12 → 2027-07-10 (-2d) |  | -68.02d → -67d |

| ID | Task | Start | Finish | Total float |
| --- | --- | --- | --- | --- |
| 239 | **RHD4-02-002-Block Works - BF-Z8-BLOCK-26** | 2027-08-16 → 2027-08-15 (-1d) | 2027-08-18 → 2027-08-17 (-1d) |  |
| RHD4CZ8B26BF2000 | Backfill Layers works Using Dynamic Compaction Crane (RIC) for Block 26 - (B1.31 23 23.03)-Z8-B26-BF | 2027-08-16 → 2027-08-15 (-1d) | 2027-08-18 → 2027-08-17 (-1d) | -98.96d → -97.95d |
| 240 | **RHD4-02-002-Block Works - BF-Z8-BLOCK-27** | 2027-08-18 → 2027-08-17 (-1d) | 2027-08-28 → 2027-08-26 (-2d) |  |
| RHD4CZ8B27BF2000 | Backfill Layers works Using Dynamic Compaction Crane (RIC) for Block 27 - (B1.31 23 23.03)-Z8-B27-BF | 2027-08-18 → 2027-08-17 (-1d) | 2027-08-28 → 2027-08-26 (-2d) | -98.96d → -97.95d |
| 241 | **RHD4-02-002-Block Works - BF-Z8-BLOCK-28** | 2027-08-28 → 2027-08-26 (-2d) | 2027-09-16 → 2027-09-15 (-1d) |  |
| RHD4CZ8B28BF2000 | Backfill Layers works Using Dynamic Compaction Crane (RIC) for Block 28 - (B1.31 23 23.03)-Z8-B28-BF | 2027-08-28 → 2027-08-26 (-2d) | 2027-09-16 → 2027-09-15 (-1d) | -98.96d → -97.95d |
| 242 | **RHD4-02-002-Block Works - BF-Z8-BLOCK-29** | 2027-09-16 → 2027-09-15 (-1d) | 2027-09-28 → 2027-09-27 (-1d) |  |
| RHD4CZ8B29BF2000 | Backfill Layers works Using Dynamic Compaction Crane (RIC) for Block 29 - (B1.31 23 23.03)-Z8-B29-BF | 2027-09-16 → 2027-09-15 (-1d) | 2027-09-28 → 2027-09-27 (-1d) | -98.96d → -97.95d |
| 243 | **RHD4-02-002-Z9-Block Works - Backfill** |  | 2027-09-23 → 2027-08-08 (-46d) |  |
| 244 | **RHD4-02-002-Block Works - BF-Z9-BLOCK-30** |  | 2027-07-07 → 2027-07-06 (-1d) |  |
| RHD4CZ9B30BF2000 | Backfill Layers works Using Dynamic Compaction Crane (RIC) for Block 30 - (B1.31 23 23.03)-Z9-B30-BF |  | 2027-07-07 → 2027-07-06 (-1d) | -56.96d → -55.95d |
| 245 | **RHD4-02-002-Block Works - BF-Z9-BLOCK-31** |  | 2027-07-10 → 2027-07-08 (-2d) |  |
| RHD4CZ9B31BF2000 | Backfill Layers works Using Dynamic Compaction Crane (RIC) for Block 31 - (B1.31 23 23.03)-Z9-B31-BF |  | 2027-07-10 → 2027-07-08 (-2d) | -56.96d → -55.95d |
| 246 | **RHD4-02-002-Block Works - BF-Z9-BLOCK-32** |  | 2027-07-15 → 2027-07-14 (-1d) |  |
| RHD4CZ9B32BF2000 | Backfill Layers works Using Dynamic Compaction Crane (RIC) for Block 32 - (B1.31 23 23.03)-Z9-B32-BF |  | 2027-07-15 → 2027-07-14 (-1d) | -56.96d → -55.95d |
| 248 | **RHD4-02-002-Block Works - BF-Z9-BLOCK-34** |  | 2027-07-27 → 2027-07-26 (-1d) |  |
| RHD4CZ9B34BF2000 | Backfill Layers works Using Dynamic Compaction Crane (RIC) for Block 34 - (B1.31 23 23.03)-Z9-B34-BF |  | 2027-07-27 → 2027-07-26 (-1d) | -56.96d → -55.95d |
| 249 | **RHD4-02-002-Block Works - BF-Z9-BLOCK-35** |  | 2027-08-09 → 2027-08-08 (-1d) |  |
| RHD4CZ9B35BF2000 | Backfill Layers works Using Dynamic Compaction Crane (RIC) for Block 35 - (B1.31 23 23.03)-Z9-B35-BF |  | 2027-08-09 → 2027-08-08 (-1d) | -56.96d → -55.95d |
| 250 | **RHD4-02-002-Block Works - BF-Z9-BLOCK-36** |  | 2027-09-23 → 2026-09-23 (-365d) |  |
| RHD4CZ9B36BF2000 | Backfill Layers works Using Dynamic Compaction Crane (RIC) for Block 36 - (B1.31 23 23.03)-Z9-B36-BF |  | 2027-09-23 A → 2026-09-23 A (-365d) |  |
| 229 | **RHD4-02-002-Z7-Block Works - Backfill** |  | 2027-07-22 → 2027-07-21 (-1d) |  |
| 235 | **RHD4-02-002-Block Works - BF-Z7-BLOCK-23** |  | 2027-07-05 → 2027-07-03 (-2d) |  |
| RHD4CZ7B23BF2000 | Backfill Layers works Using Dynamic Compaction Crane (RIC) for Block 23 - (B1.31 23 23.03)-Z7-B23-BF |  | 2027-07-05 → 2027-07-03 (-2d) | 4.98d → 6d |
| 236 | **RHD4-02-002-Block Works - BF-Z7-BLOCK-24** | 2027-06-28 → 2027-06-27 (-1d) | 2027-07-22 → 2027-07-21 (-1d) |  |
| RHD4CZ7B24BF2000 | Backfill Layers works Using Dynamic Compaction Crane (RIC) for Block 24 - (B1.31 23 23.03)-Z7-B24-BF | 2027-06-28 → 2027-06-27 (-1d) | 2027-07-22 → 2027-07-21 (-1d) | -76.85d → -75.83d |
| 218 | **RHD4-02-002-Z5-Block Works - Backfill** |  | 2027-06-24 → 2027-06-23 (-1d) |  |
| 223 | **RHD4-02-002-Block Works - BF-Z5-BLOCK-14** |  | 2027-06-24 → 2027-06-23 (-1d) |  |
| RHD4CZ5B14BF2000 | Backfill Layers works Using Dynamic Compaction Crane (RIC) for Block 14 - (B1.31 23 23.03)-Z5-B14-BF |  | 2027-06-24 → 2027-06-23 (-1d) | -25.67d → -24.65d |
| 207 | **RHD4-02-002-Z2-Block Works - Backfill** |  | 2027-06-29 → 2027-06-28 (-1d) |  |
| 208 | **RHD4-02-002-Block Works - BF-Z2-BLOCK-04** |  | 2027-06-29 → 2027-06-28 (-1d) |  |
| RHD4CZ2B04BF2000 | Backfill Layers works Using Dynamic Compaction Crane (RIC) for Block 04 - (B1.31 23 23.03)-Z2-B04-BF |  | 2027-06-29 → 2027-06-28 (-1d) | -25.67d → -24.65d |
| 212 | **RHD4-02-002-Z4-Block Works - Backfill** |  | 2027-09-15 → 2027-09-13 (-2d) |  |
| 214 | **RHD4-02-002-Block Works - BF-Z4-BLOCK-07** | 2027-08-16 → 2027-08-15 (-1d) | 2027-09-12 → 2027-09-09 (-3d) |  |
| RHD4CZ4B07BF2000 | Backfill Layers works Using Dynamic Compaction Crane (RIC) for Block 07 - (B1.31 23 23.03)-Z4-B07-BF | 2027-08-16 → 2027-08-15 (-1d) | 2027-08-18 → 2027-08-16 (-2d) | 18.98d → 20d |
| RHD4CZ4B07BF4000 | Soil improvement works by Dynamic Compaction (DC) for Block 07 - Stage 1 - (B1.31 23 23.23.01)-Z4-B07-BF | 2027-08-18 → 2027-08-17 (-1d) | 2027-09-12 → 2027-09-09 (-3d) | 18.98d → 20d |
| RHD4CZ4B07BF4001 | Soil improvement works by Dynamic Compaction (DC) for Block 07 - Stage 2 - (B1.31 23 23.23.01)-Z4-B07-BF | 2027-08-18 → 2027-08-17 (-1d) | 2027-09-12 → 2027-09-09 (-3d) | 18.98d → 20d |
| 215 | **RHD4-02-002-Block Works - BF-Z4-BLOCK-08** |  | 2027-08-18 → 2027-08-16 (-2d) |  |
| RHD4CZ4B08BF2000 | Backfill Layers works Using Dynamic Compaction Crane (RIC) for Block 08 - (B1.31 23 23.03)-Z4-B08-BF |  | 2027-07-21 → 2027-07-20 (-1d) | 21.33d → 22.35d |
| RHD4CZ4B08BF4000 | Soil improvement works by Dynamic Compaction (DC) for Block 08 - Stage 1 - (B1.31 23 23.23.01)-Z4-B08-BF | 2027-07-25 → 2027-07-24 (-1d) | 2027-08-18 → 2027-08-16 (-2d) | 18.98d → 20d |
| 217 | **RHD4-02-002-Block Works - BF-Z4-BLOCK-Z4** |  | 2027-09-15 → 2027-09-13 (-2d) |  |
| RHD4CZ4BZ4BF4000 | Soil improvement works by Dynamic Compaction (DC) for Block BZ4 - Stage 1 - (B1.31 23 23.23.01)-Z4-BZ4-BF | 2027-08-09 → 2027-08-08 (-1d) | 2027-08-28 → 2027-08-25 (-3d) | -92.02d → -91d |
| RHD4CZ4BZ4BF4001 | Soil improvement works by Dynamic Compaction (DC) for Block BZ4 - Stage 2 - (B1.31 23 23.23.01)-Z4-BZ4-BF | 2027-08-28 → 2027-08-26 (-2d) | 2027-09-15 → 2027-09-13 (-2d) | -92.02d → -91d |
| 1 | **RHD4-02-002-Block Works - BF-Z4-BLOCK-06** | 2027-07-05 → 2027-07-04 (-1d) | 2027-07-25 → 2027-07-22 (-3d) |  |
| RHD4CZ4B06BF4000 | Soil improvement works by Dynamic Compaction (DC) for Block 06 - Stage 1 - (B1.31 23 23.23.01)-Z4-B06-BF | 2027-07-05 → 2027-07-04 (-1d) | 2027-07-25 → 2027-07-22 (-3d) | -79.02d → -78d |
| 203 | **RHD4-02-002-Z1-Block Works - Backfill** |  | 2027-07-07 → 2027-07-05 (-2d) |  |
| 204 | **RHD4-02-002-Block Works - BF-Z1-BLOCK-01** |  | 2027-07-07 → 2027-07-05 (-2d) |  |
| RHD4CZ1B01BF2000 | Backfill Layers works Using Dynamic Compaction Crane (RIC) for Block 01 - (B1.31 23 23.03)-Z1-B01-BF |  | 2027-07-07 → 2027-07-05 (-2d) | -42.02d → -41d |
| 205 | **RHD4-02-002-Block Works - BF-Z1-BLOCK-02** |  | 2027-07-05 → 2027-07-03 (-2d) |  |
| RHD4CZ1B02BF2000 | Backfill Layers works Using Dynamic Compaction Crane (RIC) for Block 02 - (B1.31 23 23.03)-Z1-B02-BF |  | 2027-07-05 → 2027-07-03 (-2d) | -79.02d → -78d |
| 251 | **RHD4-02-002-Road Works - RW** |  | 2028-02-10 → 2028-02-08 (-2d) |  |
| 270 | **RHD4-02-002-Z5-Road Works** |  | 2027-01-18 → 2027-01-25 (+7d) |  |
| 271 | **RHD4-02-002-Road Works - RW-Z5-(RD-A-1 /4)** |  | 2026-12-02 → 2026-12-09 (+7d) |  |
| RHD4CZ5A014RW3000 | Backfill Layers works using Improved fill Material for Road (RD-A-1 /4) - Stage 1 - (B1.31 23 23.01)-Z5-A014-RW | 2026-11-10 → 2026-11-17 (+7d) | 2026-11-15 → 2026-11-22 (+7d) | -173d → -169d |
| RHD4CZ5A014RW3001 | Backfill Layers works using Improved fill Material for Road (RD-A-1 /4) - Stage 2 - (B1.31 23 23.01)-Z5-A014-RW | 2026-11-16 → 2026-11-23 (+7d) | 2026-11-21 → 2026-11-28 (+7d) | -173d → -169d |
| RHD4CZ5A014RW3002 | Backfill Layers works using Improved fill Material for Road (RD-A-1 /4) - Stage 3 - (B1.31 23 23.01)-Z5-A014-RW | 2026-11-22 → 2026-11-29 (+7d) | 2026-11-26 → 2026-12-03 (+7d) | -173d → -169d |
| RHD4CZ5A014RW3003 | Backfill Layers works using Improved fill Material for Road (RD-A-1 /4) - Stage 4 - (B1.31 23 23.01)-Z5-A014-RW | 2026-11-28 → 2026-12-05 (+7d) | 2026-12-02 → 2026-12-09 (+7d) | -173d → -169d |
| 272 | **RHD4-02-002-Road Works - RW-Z5-(RD-C-5 /1)** |  | 2026-11-23 → 2026-11-30 (+7d) |  |
| RHD4CZ5C051RW3000 | Backfill Layers works using Improved fill Material for Road (RD-C-5 /1) - (B1.31 23 23.01)-Z5-C051-RW | 2026-11-10 → 2026-11-17 (+7d) | 2026-11-23 → 2026-11-30 (+7d) | -198d → -194d |
| 273 | **RHD4-02-002-Road Works - RW-Z5-(RD-C-6 /1)** |  | 2026-12-26 → 2027-01-02 (+7d) |  |
| RHD4CZ5C061RW3000 | Backfill Layers works using Improved fill Material for Road (RD-C-6 /1) - (B1.31 23 23.01)-Z5-C061-RW | 2026-11-24 → 2026-12-01 (+7d) | 2026-12-26 → 2027-01-02 (+7d) | -198d → -194d |
| 274 | **RHD4-02-002-Road Works - RW-Z5-(RD-L-16)** |  | 2027-01-11 → 2027-01-18 (+7d) |  |
| RHD4CZ5L016RW2000 | Backfill Layers works Using Dynamic Compaction Crane (RIC) for Road (RD-L-16) - (B1.31 23 23.03)-Z5-L016-RW |  | 2026-11-10 → 2026-11-17 (+7d) | -153d → -149d |
| RHD4CZ5L016RW3000 | Backfill Layers works using Improved fill Material for Road (RD-L-16) - (B1.31 23 23.01)-Z5-L016-RW | 2026-12-27 → 2027-01-03 (+7d) | 2027-01-11 → 2027-01-18 (+7d) | -154d → -160d |
| 275 | **RHD4-02-002-Road Works - RW-Z5-(RD-L-7)** |  | 2026-12-12 → 2026-12-19 (+7d) |  |
| RHD4CZ5L07RW1001 | Excavation works for Road (RD-L-7) - Stage 2 - (B1.31 23 16.01)-Z5-L07-RW |  | 2026-12-03 → 2026-12-10 (+7d) | -128d → -134d |
| RHD4CZ5L07RW3000 | Backfill Layers works using Improved fill Material for Road (RD-L-7) - (B1.31 23 23.01)-Z5-L07-RW | 2026-12-03 → 2026-12-10 (+7d) | 2026-12-12 → 2026-12-19 (+7d) | -128d → -134d |
| 276 | **RHD4-02-002-Road Works - RW-Z5-(RD-L-8)** |  | 2027-01-18 → 2027-01-25 (+7d) |  |
| RHD4CZ5L08RW3000 | Backfill Layers works using Improved fill Material for Road (RD-L-8) - (B1.31 23 23.01)-Z5-L08-RW | 2027-01-12 → 2027-01-19 (+7d) | 2027-01-18 → 2027-01-25 (+7d) | -154d → -160d |
| 277 | **RHD4-02-002-Z6-Road Works** |  | 2027-01-06 → 2027-01-13 (+7d) |  |

| ID | Task | Start | Finish | Total float |
| --- | --- | --- | --- | --- |
| 278 | **RHD4-02-002-Road Works - RW-Z6-(RD-A-1 /5)** |  | 2027-01-06 → 2027-01-13 (+7d) |  |
| RHD4CZ6A015RW1000 | Excavation works for Road (RD-A-1 /5) - (B1.31 23 16.01)-Z6-A015-RW |  | 2026-12-19 A → 2026-03-19 A (-275d) |  |
| RHD4CZ6A015RW3000 | Backfill Layers works using Improved fill Material for Road (RD-A-1 /5) - (B1.31 23 23.01)-Z6-A015-RW | 2026-12-27 → 2027-01-03 (+7d) | 2027-01-06 → 2027-01-13 (+7d) | -189d → -190d |
| 281 | **RHD4-02-002-Road Works - RW-Z6-(RD-C-6 /2)** |  | 2026-11-28 → 2026-12-05 (+7d) |  |
| RHD4CZ6C062RW3000 | Backfill Layers works using Improved fill Material for Road (RD-C-6 /2) - (B1.31 23 23.01)-Z6-C062-RW | 2026-11-10 → 2026-11-17 (+7d) | 2026-11-28 → 2026-12-05 (+7d) | -174d → -170d |
| 280 | **RHD4-02-002-Road Works - RW-Z6-(RD-C-5 /2)** |  | 2027-01-05 → 2027-01-12 (+7d) |  |
| RHD4CZ6C052RW1000 | Excavation works for Road (RD-C-5 /2) - (B1.31 23 16.01)-Z6-C052-RW |  | 2026-12-27 → 2027-01-03 (+7d) | -184d → -188d |
| RHD4CZ6C052RW3000 | Backfill Layers works using Improved fill Material for Road (RD-C-5 /2) - (B1.31 23 23.01)-Z6-C052-RW | 2026-12-27 → 2027-01-03 (+7d) | 2027-01-05 → 2027-01-12 (+7d) | -184d → -188d |
| 264 | **RHD4-02-002-Z4-Road Works** |  | 2027-08-26 → 2027-08-22 (-4d) |  |
| 294 | **RHD4-02-002-Road Works - RW-Z4-(RD-L-1)** |  | 2027-07-10 → 2027-07-05 (-5d) |  |
| RHD4CZ4L01RW3000 | Backfill Layers works using Improved fill Material for Road (RD-L-1) - (B1.31 23 23.01)-Z4-L01-RW | 2027-07-08 → 2027-07-04 (-4d) | 2027-07-10 → 2027-07-05 (-5d) | -155d → -151d |
| 265 | **RHD4-02-002-Road Works - RW-Z4-(RD-A-1 /3)** |  | 2027-08-02 → 2027-07-28 (-5d) |  |
| RHD4CZ4A013RW3000 | Backfill Layers works using Improved fill Material for Road (RD-A-1 /3) - Stage 1 - (B1.31 23 23.01)-Z4-A013-RW | 2027-07-11 → 2027-07-06 (-5d) | 2027-07-15 → 2027-07-11 (-4d) | -155d → -151d |
| RHD4CZ4A013RW3001 | Backfill Layers works using Improved fill Material for Road (RD-A-1 /3) - Stage 2 - (B1.31 23 23.01)-Z4-A013-RW | 2027-07-17 → 2027-07-12 (-5d) | 2027-07-21 → 2027-07-17 (-4d) | -155d → -151d |
| RHD4CZ4A013RW3002 | Backfill Layers works using Improved fill Material for Road (RD-A-1 /3) - Stage 3 - (B1.31 23 23.01)-Z4-A013-RW | 2027-07-22 → 2027-07-18 (-4d) | 2027-07-27 → 2027-07-22 (-5d) | -155d → -151d |
| RHD4CZ4A013RW3003 | Backfill Layers works using Improved fill Material for Road (RD-A-1 /3) - Stage 4 - (B1.31 23 23.01)-Z4-A013-RW | 2027-07-28 → 2027-07-24 (-4d) | 2027-08-02 → 2027-07-28 (-5d) | -155d → -151d |
| 267 | **RHD4-02-002-Road Works - RW-Z4-(RD-C-3/1)** |  | 2027-08-24 → 2027-08-19 (-5d) |  |
| RHD4CZ4C031RW3000 | Backfill Layers works using Improved fill Material for Road (RD-C-3/1) - (B1.31 23 23.01)-Z4-C031-RW | 2027-08-03 → 2027-07-29 (-5d) | 2027-08-24 → 2027-08-19 (-5d) | -155d → -151d |
| 268 | **RHD4-02-002-Road Works - RW-Z4-(RD-L-14)** |  | 2027-08-17 → 2027-08-12 (-5d) |  |
| RHD4CZ4L014RW3000 | Backfill Layers works using Improved fill Material for Road (RD-L-14) - (B1.31 23 23.01)-Z4-L014-RW | 2027-08-03 → 2027-07-29 (-5d) | 2027-08-17 → 2027-08-12 (-5d) | -154d → -150d |
| 269 | **RHD4-02-002-Road Works - RW-Z4-(RD-L-9)** |  | 2027-08-24 → 2027-08-19 (-5d) |  |
| RHD4CZ4L09RW2000 | Backfill Layers works Using Dynamic Compaction Crane (RIC) for Road (RD-L-9) - (B1.31 23 23.03)-Z4-L09-RW |  | 2026-11-11 → 2026-11-18 (+7d) | -147d → -140d |
| RHD4CZ4L09RW4000 | Soil improvement works by Dynamic Compaction (DC) for Road (RD-L-9) - (B1.31 23 23.23.01)-Z4-L09-RW |  | 2026-11-15 → 2026-11-22 (+7d) | -116d → -122d |
| RHD4CZ4L09RW3000 | Backfill Layers works using Improved fill Material for Road (RD-L-9) - Stage 1 - (B1.31 23 23.01)-Z4-L09-RW | 2027-08-18 → 2027-08-14 (-4d) | 2027-08-19 → 2027-08-15 (-4d) | -154d → -150d |
| RHD4CZ4L09RW3001 | Backfill Layers works using Improved fill Material for Road (RD-L-9) - Stage 2 - (B1.31 23 23.01)-Z4-L09-RW | 2027-08-21 → 2027-08-16 (-5d) | 2027-08-22 → 2027-08-17 (-5d) | -154d → -150d |
| RHD4CZ4L09RW3002 | Backfill Layers works using Improved fill Material for Road (RD-L-9) - Stage 3 - (B1.31 23 23.01)-Z4-L09-RW | 2027-08-23 → 2027-08-18 (-5d) | 2027-08-24 → 2027-08-19 (-5d) | -154d → -150d |
| 266 | **RHD4-02-002-Road Works - RW-Z4-(RD-C-1 /2)** |  | 2027-08-26 → 2027-08-22 (-4d) |  |
| RHD4CZ4C012RW1000 | Excavation works for Road (RD-C-1 /2) - (B1.31 23 16.01)-Z4-C012-RW |  | 2026-11-14 → 2026-11-21 (+7d) | -147d → -140d |
| RHD4CZ4C012RW2000 | Backfill Layers works Using Dynamic Compaction Crane (RIC) for Road (RD-C-1 /2) - (B1.31 23 23.03)-Z4-C012-RW |  | 2026-11-17 → 2026-11-24 (+7d) | -147d → -140d |
| RHD4CZ4C012RW3000 | Backfill Layers works using Improved fill Material for Road (RD-C-1 /2) - (B1.31 23 23.01)-Z4-C012-RW | 2027-08-25 → 2027-08-21 (-4d) | 2027-08-26 → 2027-08-22 (-4d) | -154d → -150d |
| 290 | **RHD4-02-002-Z8-Road Works** |  | 2027-06-23 → 2027-06-21 (-2d) |  |
| 291 | **RHD4-02-002-Road Works - RW-Z8-(RD-A-1 /1)** |  | 2026-11-15 → 2026-11-22 (+7d) |  |
| RHD4CZ8A011RW3000 | Backfill Layers works using Improved fill Material for Road (RD-A-1 /1) - (B1.31 23 23.01)-Z8-A011-RW | 2026-11-10 → 2026-11-17 (+7d) | 2026-11-15 → 2026-11-22 (+7d) | -164.02d → -161d |
| 295 | **RHD4-02-002-Road Works - RW-Z8-(RD-L-4)** |  | 2026-11-11 → 2026-11-18 (+7d) |  |
| RHD4CZ8L04RW3000 | Backfill Layers works using Improved fill Material for Road (RD-L-4) - (B1.31 23 23.01)-Z8-L04-RW | 2026-11-10 → 2026-11-17 (+7d) | 2026-11-11 → 2026-11-18 (+7d) | -160d → -156d |
| 292 | **RHD4-02-002-Road Works - RW-Z8-(RD-C-1/4)** | 2027-06-12 → 2027-06-10 (-2d) | 2027-06-23 → 2027-06-21 (-2d) |  |
| RHD4CZ8C014RW1000 | Excavation works for Road (RD-C-1/4) - (B1.31 23 16.01)-Z8-C014-RW | 2027-06-12 → 2027-06-10 (-2d) | 2027-06-16 → 2027-06-14 (-2d) | -143.02d → -142d |
| RHD4CZ8C014RW2000 | Backfill Layers works Using Dynamic Compaction Crane (RIC) for Road (RD-C-1/4) - (B1.31 23 23.03)-Z8-C014-RW | 2027-06-16 → 2027-06-15 (-1d) | 2027-06-21 → 2027-06-19 (-2d) | -143.02d → -142d |
| RHD4CZ8C014RW3000 | Backfill Layers works using Improved fill Material for Road (RD-C-1/4) - (B1.31 23 23.01)-Z8-C014-RW | 2027-06-21 → 2027-06-20 (-1d) | 2027-06-23 → 2027-06-21 (-2d) | -143.02d → -142d |
| 282 | **RHD4-02-002-Z7-Road Works** |  | 2027-02-11 → 2027-02-07 (-4d) |  |
| 286 | **RHD4-02-002-Road Works - RW-Z7-(RD-C-3/2)** |  | 2026-11-14 → 2026-11-21 (+7d) |  |
| RHD4CZ7C032RW2000 | Backfill Layers works Using Dynamic Compaction Crane (RIC) for Road (RD-C-3/2) - (B1.31 23 23.03)-Z7-C032-RW | 2026-11-10 → 2026-11-17 (+7d) | 2026-11-11 → 2026-11-18 (+7d) | -158.02d → -155d |
| RHD4CZ7C032RW3000 | Backfill Layers works using Improved fill Material for Road (RD-C-3/2) - (B1.31 23 23.01)-Z7-C032-RW | 2026-11-12 → 2026-11-19 (+7d) | 2026-11-14 → 2026-11-21 (+7d) | -158.02d → -155d |
| 289 | **RHD4-02-002-Road Works - RW-Z7-(RD-L-3)** |  | 2026-11-28 → 2026-12-05 (+7d) |  |
| RHD4CZ7L03RW3000 | Backfill Layers works using Improved fill Material for Road (RD-L-3) - (B1.31 23 23.01)-Z7-L03-RW | 2026-11-10 → 2026-11-17 (+7d) | 2026-11-28 → 2026-12-05 (+7d) | -169d → -165d |
| 287 | **RHD4-02-002-Road Works - RW-Z7-(RD-L-13/1)** |  | 2026-11-29 → 2026-12-06 (+7d) |  |
| RHD4CZ7L131RW3000 | Backfill Layers works using Improved fill Material for Road (RD-L-13/1) - (B1.31 23 23.01)-Z7-L131-RW | 2026-11-10 → 2026-11-17 (+7d) | 2026-11-29 → 2026-12-06 (+7d) | -166d → -162d |
| 284 | **RHD4-02-002-Road Works - RW-Z7-(RD-C-1/3)** |  | 2027-02-11 → 2027-02-07 (-4d) |  |
| RHD4CZ7C013RW3000 | Backfill Layers works using Improved fill Material for Road (RD-C-1/3) - (B1.31 23 23.01)-Z7-C013-RW | 2027-02-09 → 2027-02-06 (-3d) | 2027-02-11 → 2027-02-07 (-4d) | -174.02d → -171d |
| 288 | **RHD4-02-002-Road Works - RW-Z7-(RD-L-15)** |  | 2026-11-19 → 2026-11-26 (+7d) |  |
| RHD4CZ7L015RW3000 | Backfill Layers works using Improved fill Material for Road (RD-L-15) - (B1.31 23 23.01)-Z7-L015-RW | 2026-11-10 → 2026-11-17 (+7d) | 2026-11-19 → 2026-11-26 (+7d) | -166d → -162d |
| 283 | **RHD4-02-002-Road Works - RW-Z7-(RD-A-1 /2)** |  | 2026-11-24 → 2026-12-01 (+7d) |  |
| RHD4CZ7A012RW3000 | Backfill Layers works using Improved fill Material for Road (RD-A-1 /2) - (B1.31 23 23.01)-Z7-A012-RW | 2026-11-10 → 2026-11-17 (+7d) | 2026-11-24 → 2026-12-01 (+7d) | -166d → -162d |
| 285 | **RHD4-02-002-Road Works - RW-Z7-(RD-C-2)** |  | 2027-01-12 → 2027-01-19 (+7d) |  |
| RHD4CZ7C02RW2000 | Backfill Layers works Using Dynamic Compaction Crane (RIC) for Road (RD-C-2) - (B1.31 23 23.03)-Z7-C02-RW |  | 2027-01-10 → 2027-01-17 (+7d) | -184d → -188d |
| RHD4CZ7C02RW3000 | Backfill Layers works using Improved fill Material for Road (RD-C-2) - (B1.31 23 23.01)-Z7-C02-RW | 2027-01-11 → 2027-01-18 (+7d) | 2027-01-12 → 2027-01-19 (+7d) | -184d → -188d |
| 296 | **RHD4-02-002-Z9-Road Works** |  | 2026-11-22 → 2026-11-29 (+7d) |  |
| 297 | **RHD4-02-002-Road Works - RW-Z9-(RD-C-7/1)** |  | 2026-11-22 → 2026-11-29 (+7d) |  |
| RHD4CZ9C071RW3000 | Backfill Layers works using Improved fill Material for Road (RD-C-7/1) - (B1.31 23 23.01)-Z9-C071-RW | 2026-11-10 → 2026-11-17 (+7d) | 2026-11-22 → 2026-11-29 (+7d) | -165.02d → -162d |
| 299 | **RHD4-02-002-Road Works - RW-Z9-(RD-L-5)** |  | 2026-11-11 → 2026-11-18 (+7d) |  |
| RHD4CZ9L05RW3000 | Backfill Layers works using Improved fill Material for Road (RD-L-5) - (B1.31 23 23.01)-Z9-L05-RW | 2026-11-10 → 2026-11-17 (+7d) | 2026-11-11 → 2026-11-18 (+7d) | -164d → -160d |
| 300 | **RHD4-02-002-Road Works - RW-Z9-(RD-L-6)** |  | 2026-11-16 → 2026-11-23 (+7d) |  |
| RHD4CZ9L06RW2000 | Backfill Layers works Using Dynamic Compaction Crane (RIC) for Road (RD-L-6) - (B1.31 23 23.03)-Z9-L06-RW |  | 2026-11-11 → 2026-11-18 (+7d) | -164d → -160d |
| RHD4CZ9L06RW3000 | Backfill Layers works using Improved fill Material for Road (RD-L-6) - (B1.31 23 23.01)-Z9-L06-RW | 2026-11-12 → 2026-11-19 (+7d) | 2026-11-16 → 2026-11-23 (+7d) | -164d → -160d |
| 298 | **RHD4-02-002-Road Works - RW-Z9-(RD-L-2)** |  | 2026-11-18 → 2026-11-25 (+7d) |  |
| RHD4CZ9L02RW2000 | Backfill Layers works Using Dynamic Compaction Crane (RIC) for Road (RD-L-2) - (B1.31 23 23.03)-Z9-L02-RW |  | 2026-11-11 → 2026-11-18 (+7d) | -161.78d → -158.76d |
| RHD4CZ9L02RW3000 | Backfill Layers works using Improved fill Material for Road (RD-L-2) - (B1.31 23 23.01)-Z9-L02-RW | 2026-11-11 → 2026-11-18 (+7d) | 2026-11-18 → 2026-11-25 (+7d) | -161.78d → -158.76d |
| 260 | **RHD4-02-002-Z3-Road Works** |  | 2027-07-07 → 2027-07-03 (-4d) |  |
| 261 | **RHD4-02-002-Road Works - RW-Z3-(RD-C-1 /1)** |  | 2027-07-07 → 2027-07-03 (-4d) |  |
| RHD4CZ3C011RW3000 | Backfill Layers works using Improved fill Material for Road (RD-C-1 /1) - Stage 1 - (B1.31 23 23.01)-Z3-C011-RW | 2027-06-29 → 2027-06-24 (-5d) | 2027-06-30 → 2027-06-26 (-4d) | -155d → -151d |

| ID | Task | Start | Finish | Complete | Total float |
| --- | --- | --- | --- | --- | --- |
| RHD4CZ3C011RW3001 | Backfill Layers works using Improved fill Material for Road (RD-C-1 /1) - Stage 2 - (B1.31 23 23.01)-Z3-C011-RW | 2027-07-01 → 2027-06-27 (-4d) | 2027-07-03 → 2027-06-28 (-5d) |  | -155d → -151d |
| RHD4CZ3C011RW3002 | Backfill Layers works using Improved fill Material for Road (RD-C-1 /1) - Stage 3 - (B1.31 23 23.01)-Z3-C011-RW | 2027-07-04 → 2027-06-29 (-5d) | 2027-07-05 → 2027-06-30 (-5d) |  | -155d → -151d |
| RHD4CZ3C011RW3003 | Backfill Layers works using Improved fill Material for Road (RD-C-1 /1) - Stage 4 - (B1.31 23 23.01)-Z3-C011-RW | 2027-07-06 → 2027-07-01 (-5d) | 2027-07-07 → 2027-07-03 (-4d) |  | -155d → -151d |
| 263 | **RHD4-02-002-Road Works - RW-Z3-(RD-L-12/2)** |  | 2027-07-03 → 2027-06-28 (-5d) |  |  |
| RHD4CZ3L122RW3000 | Backfill Layers works using Improved fill Material for Road (RD-L-12/2) - Stage 1 - (B1.31 23 23.01)-Z3-L122-RW | 2027-06-27 → 2027-06-22 (-5d) | 2027-06-28 → 2027-06-23 (-5d) |  | -149d → -145d |
| RHD4CZ3L122RW3001 | Backfill Layers works using Improved fill Material for Road (RD-L-12/2) - Stage 2 - (B1.31 23 23.01)-Z3-L122-RW | 2027-06-29 → 2027-06-24 (-5d) | 2027-06-30 → 2027-06-26 (-4d) |  | -149d → -145d |
| RHD4CZ3L122RW3002 | Backfill Layers works using Improved fill Material for Road (RD-L-12/2) - Stage 3 - (B1.31 23 23.01)-Z3-L122-RW | 2027-07-01 → 2027-06-27 (-4d) | 2027-07-03 → 2027-06-28 (-5d) |  | -149d → -145d |
| 262 | **RHD4-02-002-Road Works - RW-Z3-(RD-C-8 /3)** | 2027-01-17 → 2027-01-24 (+7d) | 2027-07-03 → 2027-06-28 (-5d) |  |  |
| RHD4CZ3C083RW1000 | Excavation works for Road (RD-C-8 /3) - (B1.31 23 16.01)-Z3-C083-RW | 2027-01-17 → 2027-01-24 (+7d) | 2027-02-09 → 2027-02-16 (+7d) |  | -140d → -146d |
| RHD4CZ3C083RW2000 | Backfill Layers works Using Dynamic Compaction Crane (RIC) for Road (RD-C-8 /3) - (B1.31 23 23.03)-Z3-C083-RW | 2027-02-10 → 2027-02-17 (+7d) | 2027-02-11 → 2027-02-18 (+7d) |  | -140d → -146d |
| RHD4CZ2C083RW3000 | Backfill Layers works using Improved fill Material for Road (RD-C-8 /3) - Stage 1 - (B1.31 23 23.01)-Z2-C083-RW | 2027-06-29 → 2027-06-24 (-5d) | 2027-06-30 → 2027-06-26 (-4d) |  | -149d → -145d |
| RHD4CZ3C083RW3001 | Backfill Layers works using Improved fill Material for Road (RD-C-8 /3) - Stage 2 - (B1.31 23 23.01)-Z3-C083-RW | 2027-07-01 → 2027-06-27 (-4d) | 2027-07-03 → 2027-06-28 (-5d) |  | -149d → -145d |
| 255 | **RHD4-02-002-Z2-Road Works** |  | 2028-02-10 → 2028-02-08 (-2d) |  |  |
| 257 | **RHD4-02-002-Road Works - RW-Z2-(RD-L-10/2)** |  | 2028-02-10 → 2028-02-08 (-2d) |  |  |
| RHD4CZ1L102RW3000 | Backfill Layers works using Improved fill Material for Road (RD-L-10/2) - Stage 1 - (B1.31 23 23.01)-Z1-L102-RW | 2028-02-03 → 2028-02-02 (-1d) | 2028-02-06 → 2028-02-03 (-3d) |  | -183.02d → -182d |
| RHD4CZ2L102RW3001 | Backfill Layers works using Improved fill Material for Road (RD-L-10/2) - Stage 2 - (B1.31 23 23.01)-Z2-L102-RW | 2028-02-06 → 2028-02-05 (-1d) | 2028-02-08 → 2028-02-06 (-2d) |  | -183.02d → -182d |
| RHD4CZ2L102RW3002 | Backfill Layers works using Improved fill Material for Road (RD-L-10/2) - Stage 3 - (B1.31 23 23.01)-Z2-L102-RW | 2028-02-08 → 2028-02-07 (-1d) | 2028-02-10 → 2028-02-08 (-2d) |  | -183.02d → -182d |
| 258 | **RHD4-02-002-Road Works - RW-Z2-(RD-L-11)** |  | 2027-06-26 → 2027-06-21 (-5d) |  |  |
| RHD4CZ2L011RW3000 | Backfill Layers works using Improved fill Material for Road (RD-L-11) - (B1.31 23 23.01)-Z2-L011-RW | 2027-06-24 → 2027-06-20 (-4d) | 2027-06-26 → 2027-06-21 (-5d) |  | -155d → -151d |
| 256 | **RHD4-02-002-Road Works - RW-Z2-(RD-C-8 /2)** |  | 2027-06-28 → 2027-06-23 (-5d) |  |  |
| RHD4CZ2C082RW3000 | Backfill Layers works using Improved fill Material for Road (RD-C-8 /2) - (B1.31 23 23.01)-Z2-C082-RW | 2027-06-27 → 2027-06-22 (-5d) | 2027-06-28 → 2027-06-23 (-5d) |  | -155d → -151d |
| 252 | **RHD4-02-002-Z1-Road Works** |  | 2028-01-29 → 2028-01-20 (-9d) |  |  |
| 254 | **RHD4-02-002-Road Works - RW-Z1-(RD-L-10/1)** |  | 2028-01-29 → 2028-01-20 (-9d) |  |  |
| RHD4CZ1L101RW3000 | Backfill Layers works using Improved fill Material for Road (RD-L-10/1) - (B1.31 23 23.01)-Z1-L101-RW | 2028-01-27 → 2028-01-19 (-8d) | 2028-01-29 → 2028-01-20 (-9d) |  | -193d → -186d |
| 253 | **RHD4-02-002-Road Works - RW-Z1-(RD-C-8 /1)** |  | 2027-11-16 → 2027-11-17 (+1d) |  |  |
| RHD4CZ1C081RW3000 | Backfill Layers works using Improved fill Material for Road (RD-C-8 /1) - (B1.31 23 23.01)-Z1-C081-RW | 2027-11-15 → 2027-11-16 (+1d) | 2027-11-16 → 2027-11-17 (+1d) |  | -82d → -83d |
| 301 | **RHD4-02-002-Round About - RA** |  | 2027-01-12 → 2027-01-19 (+7d) |  |  |
| 304 | **RHD4-02-002-Z4-Round Abouts** |  | 2026-11-11 → 2026-11-18 (+7d) |  |  |
| 305 | **RHD4-02-002-Road Works - RW-Z4-(ROUND-02)** |  | 2026-11-11 → 2026-11-18 (+7d) |  |  |
| RHD4CZ4RA02RA3000 | Backfill Layers works using Improved fill Material for (ROUND-02) - (B1.31 23 23.01)-Z4-RA02-RA | 2026-11-10 → 2026-11-17 (+7d) | 2026-11-11 → 2026-11-18 (+7d) |  | -155d → -151d |
| 306 | **RHD4-02-002-Z5-Round Abouts** |  | 2026-12-31 → 2027-01-07 (+7d) |  |  |
| 307 | **RHD4-02-002-Road Works - RW-Z5-(ROUND-07)** |  | 2026-12-31 → 2027-01-07 (+7d) |  |  |
| RHD4CZ5RA07RA2000 | Backfill Layers works Using Dynamic Compaction Crane (RIC) for (ROUND-07) - (B1.31 23 23.03)-Z5-RA07-RA |  | 2026-11-10 → 2026-08-17 A (-85d) | 81% → 100% | -158d → none |
| RHD4CZ5RA07RA3000 | Backfill Layers works using Improved fill Material for (ROUND-07) - (B1.31 23 23.01)-Z5-RA07-RA | 2026-12-27 → 2027-01-03 (+7d) | 2026-12-31 → 2027-01-07 (+7d) |  | -198d → -194d |
| 308 | **RHD4-02-002-Z6-Round Abouts** |  | 2026-11-16 → 2026-11-23 (+7d) |  |  |
| 309 | **RHD4-02-002-Road Works - RW-Z6-(ROUND-01)** |  | 2026-11-16 → 2026-11-23 (+7d) |  |  |
| RHD4CZ6RA01RA3000 | Backfill Layers works using Improved fill Material for (ROUND-01) - (B1.31 23 23.01)-Z6-RA01-RA | 2026-11-10 → 2026-11-17 (+7d) | 2026-11-16 → 2026-11-23 (+7d) |  | -164d → -160d |
| 310 | **RHD4-02-002-Z7-Round Abouts** |  | 2027-01-12 → 2027-01-19 (+7d) |  |  |
| 311 | **RHD4-02-002-Road Works - RW-Z7-(ROUND-03)** |  | 2027-01-12 → 2027-01-19 (+7d) |  |  |
| RHD4CZ7RA03RA3000 | Backfill Layers works using Improved fill Material for (ROUND-03) - (B1.31 23 23.01)-Z7-RA03-RA | 2027-01-11 → 2027-01-18 (+7d) | 2027-01-12 → 2027-01-19 (+7d) |  | -184d → -188d |
| 312 | **RHD4-02-002-Road Works - RW-Z7-(ROUND-05)** |  | 2027-01-12 → 2027-01-19 (+7d) |  |  |
| RHD4CZ7RA05RA2000 | Backfill Layers works Using Dynamic Compaction Crane (RIC) for (ROUND-05) - (B1.31 23 23.03)-Z7-RA05-RA |  | 2027-01-10 → 2027-01-17 (+7d) |  | -119d → -125d |
| RHD4CZ7RA05RA1000 | Excavation works for (ROUND-05) - (B1.31 23 16.01)-Z7-RA05-RA | 2027-01-06 → 2027-01-13 (+7d) | 2027-01-09 → 2027-01-16 (+7d) |  | -119d → -125d |
| RHD4CZ7RA05RA3000 | Backfill Layers works using Improved fill Material for (ROUND-05) - (B1.31 23 23.01)-Z7-RA05-RA | 2027-01-11 → 2027-01-18 (+7d) | 2027-01-12 → 2027-01-19 (+7d) |  | -119d → -125d |
| 313 | **RHD4-02-002-Z8-Round Abouts** |  | 2026-11-21 → 2026-11-28 (+7d) |  |  |
| 314 | **RHD4-02-002-Road Works - RW-Z8-(ROUND-04)** |  | 2026-11-21 → 2026-11-28 (+7d) |  |  |
| RHD4CZ8RA04RA3000 | Backfill Layers works using Improved fill Material for (ROUND-04) - (B1.31 23 23.01)-Z8-RA04-RA | 2026-11-10 → 2026-11-17 (+7d) | 2026-11-21 → 2026-11-28 (+7d) |  | -164.02d → -161d |
| 4676 | **RHD4-02-002-Z6** |  | 2028-02-01 → 2028-01-29 (-3d) |  |  |
| 5244 | **RHD4-02-002-Z6-C062** |  | 2028-01-31 → 2028-01-27 (-4d) |  |  |
| 5423 | **RHD4-02-002-Z6-C062-Road Works - RD** |  | 2028-01-31 → 2028-01-27 (-4d) |  |  |
| 5425 | **RHD4-02-002-C062-(RD)-Aggregate Base Course** | 2027-01-31 → 2027-02-06 (+6d) | 2027-02-04 → 2027-02-10 (+6d) |  |  |
| RHD4CZ6C062RD2100 | Supply, lay and compaction Aggregate base course compacted thickness 300 mmfor Roads - (RD-C-6 /2)-Z6-C062-RD | 2027-01-31 → 2027-02-06 (+6d) | 2027-02-04 → 2027-02-10 (+6d) |  | -144d → -149d |
| 5426 | **RHD4-02-002-C062-(RD)-Bituminous base course Two Layers, including (MC1)&(RC2)** | 2027-03-06 → 2027-02-28 (-6d) | 2028-01-12 → 2028-01-09 (-3d) |  |  |
| RHD4CZ6C062RD3100 | Supply, lay and Asphaltic base course including Prime Coat (MC1) for 1st Layer - (RD-C-6 /2)-Z6-C062-RD | 2027-03-06 → 2027-02-28 (-6d) | 2027-03-07 → 2027-03-01 (-6d) |  | -167d → -162d |
| RHD4CZ6C062RD3200 | Supply, lay and Asphaltic base course including Tack Coat (RC2) for 2nd Layer - (RD-C-6 /2)-Z6-C062-RD | 2028-01-10 → 2028-01-08 (-2d) | 2028-01-12 → 2028-01-09 (-3d) |  | -190.02d → -188d |
| 5428 | **RHD4-02-002-C062-(RD)-Precast Concrete Curb** | 2028-01-12 → 2028-01-10 (-2d) | 2028-01-19 → 2028-01-16 (-3d) |  |  |
| RHD4CZ6C062RD5100 | Supply and installation Precast Concrete Kerb for Roads - (RD-C-6 /2)-Z6-C062-RD | 2028-01-12 → 2028-01-10 (-2d) | 2028-01-19 → 2028-01-16 (-3d) |  | -190.02d → -188d |
| 5431 | **RHD4-02-002-C062-(RD)-Traffic Signage** | 2028-01-19 → 2028-01-17 (-2d) | 2028-01-27 → 2028-01-24 (-3d) |  |  |
| RHD4CZ6C062RD8100 | Installation of Traffic Signage for Road Network - (RD-C-6 /2)-Z6-C062-RD | 2028-01-19 → 2028-01-17 (-2d) | 2028-01-27 → 2028-01-24 (-3d) |  | -190.02d → -188d |
| 5427 | **RHD4-02-002-C062-(RD)-Bituminous concrete wearing course including tack coat (RC2)** | 2028-01-19 → 2028-01-17 (-2d) | 2028-01-22 → 2028-01-18 (-4d) |  |  |
| RHD4CZ6C062RD4100 | Supply, lay and compaction Asphaltic wearing course including tack Coat (RC2)for Road Network - (RD-C-6 /2)-Z6-C062-RD | 2028-01-19 → 2028-01-17 (-2d) | 2028-01-22 → 2028-01-18 (-4d) |  | -185.02d → -183d |
| 5430 | **RHD4-02-002-C062-(RD)-Pavement Marking** | 2028-01-27 → 2028-01-25 (-2d) | 2028-01-31 → 2028-01-27 (-4d) |  |  |
| RHD4CZ6C062RD7100 | Pavement Markings for Road Network - (RD-C-6 /2)-Z6-C062-RD | 2028-01-27 → 2028-01-25 (-2d) | 2028-01-31 → 2028-01-27 (-4d) |  | -190.02d → -188d |
| 5248 | **RHD4-02-002-Z6-C062-Storm Network - ST** |  | 2027-04-24 → 2027-04-22 (-2d) |  |  |
| 4132 | **RHD4-02-002-C062-(ST)-MH Works - 2000 mm diameter** |  | 2027-02-01 → 2027-02-02 (+1d) |  |  |
| RHD4CZ6C062ST3302 | MH Ring and C.Slab works and Backfilling works for MH 2000 mm - (RD-C-6 /2)-Z6-C062-ST | 2027-01-26 → 2027-01-27 (+1d) | 2027-01-27 → 2027-01-28 (+1d) |  | -198d → -189d |
| RHD4CZ6C062ST3402 | Steel Cover for MH 2000 mm - (RD-C-6 /2)-Z6-C062-ST | 2027-01-28 → 2027-01-30 (+2d) | 2027-01-30 → 2027-01-31 (+1d) |  | -198d → -189d |
| RHD4CZ6C062ST3502 | Finishing, Benching, Testing works for MH 2000 mm - (RD-C-6 /2)-Z6-C062-ST | 2027-01-31 → 2027-02-01 (+1d) | 2027-02-01 → 2027-02-02 (+1d) |  | -198d → -189d |
| RHD4CZ6C062ST1306 | Installing for GRP Pipe Line 1000 mm - (RD-C-6 /2)-Z6-C062-ST | 2026-08-09 A → 2026-09-21 A (+43d) |  |  |  |
| RHD4CZ6C062ST1506 | Backfilling and warning tape works for GRP Pipe Line 1000 mm - (RD-C-6 /2)-Z6-C062-ST | 2026-08-16 A → 2026-10-01 A (+46d) |  |  |  |

| ID | Task | Start | Finish | Complete | Total float |
| --- | --- | --- | --- | --- | --- |
| 5266 | **RHD4-02-002-C062-(ST)-MH Works - 1500 mm diameter** |  | 2027-04-24 → 2027-04-22 (-2d) |  |  |
| RHD4CZ6C062ST3101 | Excavation and PC Blinding works for MH 1500 mm - (RD-C-6 /2)-Z6-C062-ST |  | 2026-08-06 A → 2026-08-08 A (+2d) |  |  |
| RHD4CZ6C062ST3301 | MH Ring and C.Slab works and Backfilling works for MH 1500 mm - (RD-C-6 /2)-Z6-C062-ST | 2027-01-26 → 2027-01-27 (+1d) | 2027-01-28 → 2027-01-30 (+2d) |  | -113d → -114d |
| RHD4CZ6C062ST3401 | Steel Cover for MH 1500 mm - (RD-C-6 /2)-Z6-C062-ST | 2027-04-10 → 2027-04-08 (-2d) | 2027-04-11 → 2027-04-10 (-1d) |  | -169d → -168d |
| RHD4CZ6C062ST3501 | Finishing, Benching, Testing works for MH 1500 mm - (RD-C-6 /2)-Z6-C062-ST | 2027-04-21 → 2027-04-20 (-1d) | 2027-04-24 → 2027-04-22 (-2d) |  | -177d → -176d |
| 5265 | **RHD4-02-002-C062-(ST)-MH Works - 1200 mm diameter** |  | 2027-04-20 → 2027-04-19 (-1d) |  |  |
| RHD4CZ6C062ST3100 | Excavation and PC Blinding works for MH 1200 mm - (RD-C-6 /2)-Z6-C062-ST |  | 2026-08-06 A → 2027-01-27 (+174d) | 100% → 67% | none → -152d |
| RHD4CZ6C062ST3200 | Installation of Base for MH 1200 mm - (RD-C-6 /2)-Z6-C062-ST |  | 2026-10-20 A → 2027-01-31 (+103d) | 100% → 67% | none → -149d |
| RHD4CZ6C062ST3300 | MH Ring and C.Slab works and Backfilling works for MH 1200 mm - (RD-C-6 /2)-Z6-C062-ST | 2027-01-26 → 2026-11-12 A (-75d) | 2027-01-30 → 2027-02-04 (+5d) | 0% → 17% | -144d → -149d |
| RHD4CZ6C062ST3400 | Steel Cover for MH 1200 mm - (RD-C-6 /2)-Z6-C062-ST | 2027-04-05 → 2027-04-04 (-1d) | 2027-04-08 → 2027-04-07 (-1d) |  | -171d → -170d |
| RHD4CZ6C062ST3500 | Finishing, Benching, Testing works for MH 1200 mm - (RD-C-6 /2)-Z6-C062-ST | 2027-04-17 → 2027-04-15 (-2d) | 2027-04-20 → 2027-04-19 (-1d) |  | -177d → -176d |
| 5253 | **RHD4-02-002-C062-(ST)-GRP Pipes - 800 mm diameter** |  | 2027-03-01 → 2027-02-28 (-1d) |  |  |
| RHD4CZ6C062ST1404 | Primary Test for GRP Pipe Line 800 mm - (RD-C-6 /2)-Z6-C062-ST | 2027-02-28 → 2027-02-27 (-1d) | 2027-03-01 → 2027-02-28 (-1d) |  | -145d → -144d |
| 5252 | **RHD4-02-002-C062-(ST)-GRP Pipes - 700 mm diameter** |  | 2027-03-01 → 2027-02-28 (-1d) |  |  |
| RHD4CZ6C062ST1403 | Primary Test for GRP Pipe Line 700 mm - (RD-C-6 /2)-Z6-C062-ST | 2027-02-28 → 2027-02-27 (-1d) | 2027-03-01 → 2027-02-28 (-1d) |  | -145d → -144d |
| 5251 | **RHD4-02-002-C062-(ST)-GRP Pipes - 600 mm diameter** |  | 2027-03-01 → 2027-02-28 (-1d) |  |  |
| RHD4CZ6C062ST1402 | Primary Test for GRP Pipe Line 600 mm - (RD-C-6 /2)-Z6-C062-ST | 2027-02-28 → 2027-02-27 (-1d) | 2027-03-01 → 2027-02-28 (-1d) |  | -145d → -144d |
| 5250 | **RHD4-02-002-C062-(ST)-GRP Pipes - 500 mm diameter** |  | 2027-03-01 → 2027-02-28 (-1d) |  |  |
| RHD4CZ6C062ST1401 | Primary Test for GRP Pipe Line 500 mm - (RD-C-6 /2)-Z6-C062-ST | 2027-02-28 → 2027-02-27 (-1d) | 2027-03-01 → 2027-02-28 (-1d) |  | -145d → -144d |
| 5249 | **RHD4-02-002-C062-(ST)-GRP Pipes - 400 mm diameter** |  | 2027-03-01 → 2027-02-28 (-1d) |  |  |
| RHD4CZ6C062ST1400 | Primary Test for GRP Pipe Line 400 mm - (RD-C-6 /2)-Z6-C062-ST | 2027-02-28 → 2027-02-27 (-1d) | 2027-03-01 → 2027-02-28 (-1d) |  | -145d → -144d |
| 5272 | **RHD4-02-002-Z6-C062-Catch Basin - ST** |  | 2027-04-15 → 2027-04-14 (-1d) |  |  |
| 5273 | **RHD4-02-002-C062-(ST)-Single Catch Basin Works** |  | 2027-04-15 → 2027-04-14 (-1d) |  |  |
| RHD4CZ6C062ST7100 | Excavation works for Single Catch Basin - (RD-C-6 /2)-Z6-C062-ST |  | 2027-03-06 → 2027-03-04 (-2d) |  | -177d → -176d |
| RHD4CZ6C062ST7200 | PC Blinding, Installation and Pipe connection for Single Catch Basin - (RD-C-6 /2)-Z6-C062-ST |  | 2027-03-16 → 2027-03-15 (-1d) |  | -177d → -176d |
| RHD4CZ6C062ST7300 | Rings & C.Slab & Final Backfill for Single Catch Basin - (RD-C-6 /2)-Z6-C062-ST | 2027-03-17 → 2027-03-16 (-1d) | 2027-03-25 → 2027-03-24 (-1d) |  | -177d → -176d |
| RHD4CZ6C062ST7400 | Steel Cover for Single Catch Basin - (RD-C-6 /2)-Z6-C062-ST | 2027-03-27 → 2027-03-25 (-2d) | 2027-04-01 → 2027-03-31 (-1d) |  | -177d → -176d |
| RHD4CZ6C062ST7500 | Finishing and Insulation works for Single Catch Basin - (RD-C-6 /2)-Z6-C062-ST | 2027-04-03 → 2027-04-01 (-2d) | 2027-04-15 → 2027-04-14 (-1d) |  | -177d → -176d |
| 5274 | **RHD4-02-002-C062-(ST)-Double Catch Basin Works** |  | 2027-03-21 → 2027-03-20 (-1d) |  |  |
| RHD4CZ6C062ST8100 | Excavation works for Double Catch Basin - (RD-C-6 /2)-Z6-C062-ST |  | 2027-03-08 → 2027-03-07 (-1d) |  | -171d → -170d |
| RHD4CZ6C062ST8200 | PC Blinding, Installation and Pipe connection for Double Catch Basin - (RD-C-6 /2)-Z6-C062-ST |  | 2027-03-14 → 2027-03-13 (-1d) |  | -171d → -170d |
| RHD4CZ6C062ST8300 | Rings & C.Slab & Final Backfillfor Double Catch Basin - (RD-C-6 /2)-Z6-C062-ST | 2027-03-15 → 2027-03-14 (-1d) | 2027-03-16 → 2027-03-15 (-1d) |  | -171d → -170d |
| RHD4CZ6C062ST8400 | Steel Cover for Double Catch Basin - (RD-C-6 /2)-Z6-C062-ST | 2027-03-17 → 2027-03-16 (-1d) | 2027-03-18 → 2027-03-17 (-1d) |  | -171d → -170d |
| RHD4CZ6C062ST8500 | Finishing and Insulation works for Double Catch Basin - (RD-C-6 /2)-Z6-C062-ST | 2027-03-20 → 2027-03-18 (-2d) | 2027-03-21 → 2027-03-20 (-1d) |  | -167d → -166d |
| 5264 | **RHD4-02-002-C062-(ST)-UPVC Pipes - 400 mm diameter** | 2027-03-07 → 2027-03-06 (-1d) | 2027-03-28 → 2027-03-27 (-1d) |  |  |
| RHD4CZ6C062ST2101 | Excavation works for UPVC Pipe Line 400 mm - (RD-C-6 /2)-Z6-C062-ST | 2027-03-07 → 2027-03-06 (-1d) | 2027-03-08 → 2027-03-07 (-1d) |  | -171d → -170d |
| RHD4CZ6C062ST2201 | Bedding works for UPVC Pipe Line 400 mm - (RD-C-6 /2)-Z6-C062-ST | 2027-03-13 → 2027-03-08 (-5d) | 2027-03-14 → 2027-03-13 (-1d) |  | -167d → -166d |
| RHD4CZ6C062ST2301 | Installing for UPVC Pipe Line 400 mm - (RD-C-6 /2)-Z6-C062-ST | 2027-03-15 → 2027-03-14 (-1d) | 2027-03-16 → 2027-03-15 (-1d) |  | -167d → -166d |
| RHD4CZ6C062ST2401 | Primary Test for UPVC Pipe Line 400 mm - (RD-C-6 /2)-Z6-C062-ST | 2027-03-17 → 2027-03-16 (-1d) | 2027-03-18 → 2027-03-17 (-1d) |  | -164d → -163d |
| RHD4CZ6C062ST2501 | Backfilling and warning tape works for UPVC Pipe Line 400 mm - (RD-C-6 /2)-Z6-C062-ST | 2027-03-27 → 2027-03-25 (-2d) | 2027-03-28 → 2027-03-27 (-1d) |  | -170d → -169d |
| 5263 | **RHD4-02-002-C062-(ST)-UPVC Pipes - 300 mm diameter** |  | 2027-04-04 → 2027-04-03 (-1d) |  |  |
| RHD4CZ6C062ST2100 | Excavation works for UPVC Pipe Line 300 mm - (RD-C-6 /2)-Z6-C062-ST |  | 2027-03-16 → 2027-03-15 (-1d) |  | -171d → -170d |
| RHD4CZ6C062ST2200 | Bedding works for UPVC Pipe Line 300 mm - (RD-C-6 /2)-Z6-C062-ST |  | 2027-03-21 → 2027-03-20 (-1d) |  | -171d → -170d |
| RHD4CZ6C062ST2300 | Installing for UPVC Pipe Line 300 mm - (RD-C-6 /2)-Z6-C062-ST |  | 2027-03-25 → 2027-03-24 (-1d) |  | -171d → -170d |
| RHD4CZ6C062ST2400 | Primary Test for UPVC Pipe Line 300 mm - (RD-C-6 /2)-Z6-C062-ST | 2027-03-27 → 2027-03-25 (-2d) | 2027-03-29 → 2027-03-28 (-1d) |  | -171d → -170d |
| RHD4CZ6C062ST2500 | Backfilling and warning tape works for UPVC Pipe Line 300 mm - (RD-C-6 /2)-Z6-C062-ST | 2027-03-30 → 2027-03-29 (-1d) | 2027-04-04 → 2027-04-03 (-1d) |  | -171d → -170d |
| 5271 | **RHD4-02-002-C062-(ST)-Concrete Encasement** | 2027-03-24 → 2027-03-23 (-1d) | 2027-03-25 → 2027-03-24 (-1d) |  |  |
| RHD4CZ6C062ST6100 | Pipe Encasement for Storm Pipelines - (RD-C-6 /2)-Z6-C062-ST | 2027-03-24 → 2027-03-23 (-1d) | 2027-03-25 → 2027-03-24 (-1d) |  | -170d → -169d |
| 4299 | **RHD4-02-002-Z6-C062-Concrete Box Culvert - ST** |  | 2026-12-15 → 2026-12-22 (+7d) |  |  |
| 4300 | **RHD4-02-002-C062-(ST)-Concrete Box Culvert** |  | 2026-12-15 → 2026-12-22 (+7d) |  |  |
| RHD4CZ6C062ST4600 | Insulation and Testing for Box Culvert - (RD-C-6/2)-Z6-C062-ST |  | 2026-12-05 → 2026-12-12 (+7d) |  | -184d → -180d |
| RHD4CZ6C062ST4700 | Backfilling works for Box Culvert - (RD-C-6/2)-Z6-C062-ST | 2026-12-06 → 2026-12-13 (+7d) | 2026-12-15 → 2026-12-22 (+7d) |  | -184d → -180d |
| 4301 | **RHD4-02-002-C062-(ST)-Concrete Chambers** | 2026-08-20 → 2026-11-17 (+89d) | 2026-11-28 → 2026-12-05 (+7d) |  |  |
| RHD4CZ6C062ST5100 | Excavation and Bedding for Concrete Chambers - for Box Culvert - (RD-C-6/2)-Z6-C062-ST | 2026-08-20 A → 2026-11-17 (+89d) | 2026-11-14 → 2026-11-21 (+7d) | 50% → 0% | -184d → -180d |
| RHD4CZ6C062ST5200 | PC works for Concrete Chambers - for Box Culvert - (RD-C-6/2)-Z6-C062-ST | 2026-08-25 A → 2026-11-22 (+89d) | 2026-11-18 → 2026-11-25 (+7d) | 50% → 0% | -184d → -180d |
| RHD4CZ6C062ST5300 | Installation for Concrete Chambers - for Box Culvert - (RD-C-6/2)-Z6-C062-ST | 2026-08-30 A → 2026-11-26 (+88d) | 2026-11-23 → 2026-11-30 (+7d) | 50% → 0% | -184d → -180d |
| RHD4CZ6C062ST5400 | Backfilling works for Concrete Chambers - for Box Culvert - (RD-C-6/2)-Z6-C062-ST | 2026-11-24 → 2026-12-01 (+7d) | 2026-11-28 → 2026-12-05 (+7d) |  | -184d → -180d |
| 5297 | **RHD4-02-002-Z6-C062-Sewage Network - SW** |  | 2027-05-27 → 2027-05-26 (-1d) |  |  |
| 4551 | **RHD4-02-002-C062-(SW)-MH Works - 1200 mm diameter with Back drop** |  | 2027-04-27 → 2027-04-26 (-1d) |  |  |
| RHD4CZ6C062SW3301 | MH Ring and C.Slab works and Backfilling works for MH 1200 mm - (RD-C-6 /2)-Z6-C062-SW | 2027-04-21 → 2027-04-20 (-1d) | 2027-04-22 → 2027-04-21 (-1d) |  | -154d → -153d |
| RHD4CZ6C062SW3401 | Steel Cover for MH 1200 mm - (RD-C-6 /2)-Z6-C062-SW | 2027-04-24 → 2027-04-22 (-2d) | 2027-04-25 → 2027-04-24 (-1d) |  | -154d → -153d |
| RHD4CZ6C062SW3501 | Finishing, Benching, Testing works for MH 1200 mm - (RD-C-6 /2)-Z6-C062-SW | 2027-04-26 → 2027-04-25 (-1d) | 2027-04-27 → 2027-04-26 (-1d) |  | -154d → -153d |
| 5307 | **RHD4-02-002-C062-(SW)-MH Works - 1200 mm diameter** |  | 2027-05-27 → 2027-05-26 (-1d) |  |  |
| RHD4CZ6C062SW3100 | Excavation and PC Blinding works for MH 1200 mm - (RD-C-6 /2)-Z6-C062-SW |  | 2027-04-22 → 2027-04-21 (-1d) |  | -166d → -165d |
| RHD4CZ6C062SW3200 | Installation of Base for MH 1200 mm - (RD-C-6 /2)-Z6-C062-SW |  | 2027-04-25 → 2027-04-24 (-1d) |  | -166d → -165d |
| RHD4CZ6C062SW3300 | MH Ring and C.Slab works and Backfilling works for MH 1200 mm - (RD-C-6 /2)-Z6-C062-SW | 2027-04-26 → 2027-04-25 (-1d) | 2027-05-06 → 2027-05-05 (-1d) |  | -166d → -165d |
| RHD4CZ6C062SW3400 | Steel Cover for MH 1200 mm - (RD-C-6 /2)-Z6-C062-SW | 2027-05-08 → 2027-05-06 (-2d) | 2027-05-11 → 2027-05-10 (-1d) |  | -166d → -165d |
| RHD4CZ6C062SW3500 | Finishing, Benching, Testing works for MH 1200 mm - (RD-C-6 /2)-Z6-C062-SW | 2027-05-12 → 2027-05-11 (-1d) | 2027-05-27 → 2027-05-26 (-1d) |  | -166d → -165d |
| 5303 | **RHD4-02-002-C062-(SW)-UPVC Pipes - 200 mm diameter** |  | 2027-04-26 → 2027-04-27 (+1d) |  |  |
| RHD4CZ6C062SW2400 | Primary Test for UPVC Pipe Line 200 mm - (RD-C-6 /2)-Z6-C062-SW | 2027-04-24 → 2027-04-25 (+1d) | 2027-04-26 → 2027-04-27 (+1d) |  | -146d → -147d |

| ID | Task | Start | Finish | Complete | Total float |
| --- | --- | --- | --- | --- | --- |
| 5334 | **RHD4-02-002-Z6-C062-Potable Network - PT** |  | 2027-07-27 → 2027-07-24 (-3d) |  |  |
| 5335 | **RHD4-02-002-C062-(PT)-HDPE Pipes - 110 mm diameter** |  | 2027-05-08 → 2027-05-09 (+1d) |  |  |
| RHD4CZ6C062PT1100 | Excavation works for HDPE Pipline 110 mm - (RD-C-6 /2)-Z6-C062-PT |  | 2027-04-28 → 2027-04-29 (+1d) |  | -141d → -142d |
| RHD4CZ6C062PT1200 | Bedding works for HDPE Pipline 110 mm - (RD-C-6 /2)-Z6-C062-PT |  | 2027-05-01 → 2027-05-02 (+1d) |  | -141d → -142d |
| RHD4CZ6C062PT1300 | Installing for HDPE Pipline 110 mm - (RD-C-6 /2)-Z6-C062-PT |  | 2027-05-03 → 2027-05-04 (+1d) |  | -141d → -142d |
| RHD4CZ6C062PT1400 | Primary Test for HDPE Pipline 110 mm - (RD-C-6 /2)-Z6-C062-PT | 2027-05-04 → 2027-05-05 (+1d) | 2027-05-05 → 2027-05-06 (+1d) |  | -139d → -140d |
| RHD4CZ6C062PT1500 | Backfilling and warning tape works for HDPE Pipline 110 mm - (RD-C-6 /2)-Z6-C062-PT | 2027-05-06 → 2027-05-08 (+2d) | 2027-05-08 → 2027-05-09 (+1d) |  | -139d → -140d |
| 5336 | **RHD4-02-002-C062-(PT)-HDPE Pipes - 160 mm diameter** |  | 2027-05-29 → 2027-05-26 (-3d) |  |  |
| RHD4CZ6C062PT1101 | Excavation works for HDPE Pipline 160 mm - (RD-C-6 /2)-Z6-C062-PT |  | 2027-04-29 → 2027-05-01 (+2d) | 13% → 93% | -146d → -147d |
| RHD4CZ6C062PT1201 | Bedding works for HDPE Pipline 160 mm - (RD-C-6 /2)-Z6-C062-PT |  | 2027-05-11 → 2027-05-09 (-2d) | 5% → 95% | -152.02d → -151d |
| RHD4CZ6C062PT1301 | Installing for HDPE Pipline 160 mm - (RD-C-6 /2)-Z6-C062-PT |  | 2027-05-22 → 2027-05-19 (-3d) | 3% → 96% | -152.02d → -151d |
| RHD4CZ6C062PT1501 | Backfilling and warning tape works for HDPE Pipline 160 mm - (RD-C-6 /2)-Z6-C062-PT | 2027-05-24 → 2026-11-12 A (-193d) | 2027-05-29 → 2027-05-26 (-3d) | 0% → 95% | -152.02d → -151d |
| RHD4CZ6C062PT1401 | Primary Test for HDPE Pipline 160 mm - (RD-C-6 /2)-Z6-C062-PT | 2027-05-22 → 2027-05-20 (-2d) | 2027-05-24 → 2027-05-22 (-2d) |  | -152.02d → -151d |
| 5340 | **RHD4-02-002-C062-(PT)-Gate Valves (Direct Buried)** | 2027-05-19 → 2027-05-13 (-6d) | 2027-05-24 → 2027-05-22 (-2d) |  |  |
| RHD4CZ6C062PT3100 | Installation for Direct Buried Gate Valves - (RD-C-6 /2)-Z6-C062-PT | 2027-05-19 → 2027-05-13 (-6d) | 2027-05-22 → 2027-05-19 (-3d) |  | -145.02d → -144d |
| RHD4CZ6C062PT3200 | Stem and Service box for Direct Buried Gate Valves - (RD-C-6 /2)-Z6-C062-PT | 2027-05-22 → 2027-05-20 (-2d) | 2027-05-24 → 2027-05-22 (-2d) |  | -145.02d → -144d |
| 5347 | **RHD4-02-002-C062-(PT)-Fire Hydrant** | 2027-05-29 → 2027-05-27 (-2d) | 2027-07-27 → 2027-07-24 (-3d) |  |  |
| RHD4CZ6C062PT4100 | Excavation and Bedding and Pipe Installation for Fire Hydrant - (RD-C-6 /2)-Z6-C062-PT | 2027-05-29 → 2027-05-27 (-2d) | 2027-06-01 → 2027-05-30 (-2d) |  | -152.02d → -151d |
| RHD4CZ6C062PT4200 | Valve Installation for Fire Hydrant - (RD-C-6 /2)-Z6-C062-PT | 2027-06-01 → 2027-05-31 (-1d) | 2027-06-03 → 2027-06-01 (-2d) |  | -152.02d → -151d |
| RHD4CZ6C062PT4300 | Stem for Fire Hydrant - (RD-C-6 /2)-Z6-C062-PT | 2027-06-03 → 2027-06-02 (-1d) | 2027-06-06 → 2027-06-03 (-3d) |  | -152.02d → -151d |
| RHD4CZ6C062PT4400 | Fire Installation for Fire Hydrant - (RD-C-6 /2)-Z6-C062-PT | 2027-06-06 → 2027-06-05 (-1d) | 2027-06-08 → 2027-06-06 (-2d) |  | -152.02d → -151d |
| RHD4CZ6C062PT4500 | Protection Barriers for Fire Hydrant - (RD-C-6 /2)-Z6-C062-PT | 2027-07-25 → 2027-07-22 (-3d) | 2027-07-27 → 2027-07-24 (-3d) |  | -192.02d → -190d |
| 5348 | **RHD4-02-002-C062-(PT)-Concrete Encasement** | 2027-05-12 → 2027-05-11 (-1d) | 2027-05-22 → 2027-05-19 (-3d) |  |  |
| RHD4CZ6C062PT5100 | Pipe Encasement for Potable Pipelines - (RD-C-6 /2)-Z6-C062-PT | 2027-05-12 → 2027-05-11 (-1d) | 2027-05-22 → 2027-05-19 (-3d) |  | -150.02d → -149d |
| 5349 | **RHD4-02-002-Z6-C062-Irrigation Network - IRR** |  | 2027-08-31 → 2027-08-28 (-3d) |  |  |
| 5363 | **RHD4-02-002-C062-(IRR)-Air Valve Chamber** | 2027-08-19 → 2027-08-17 (-2d) | 2027-08-29 → 2027-08-25 (-4d) |  |  |
| RHD4CZ6C062IRR2102 | Excavation and Bedding for Valve Chamber for Irrigation Network - (RD-C-6 /2)-Z6-C062-IRR | 2027-08-19 → 2027-08-17 (-2d) | 2027-08-22 → 2027-08-18 (-4d) |  | -184.02d → -182d |
| RHD4CZ6C062IRR2202 | PC works for Valve Chamber for Irrigation Network - (RD-C-6 /2)-Z6-C062-IRR | 2027-08-22 → 2027-08-19 (-3d) | 2027-08-24 → 2027-08-21 (-3d) |  | -184.02d → -182d |
| RHD4CZ6C062IRR2302 | Installation for Valve Chamber for Irrigation Network - (RD-C-6 /2)-Z6-C062-IRR | 2027-08-24 → 2027-08-22 (-2d) | 2027-08-26 → 2027-08-23 (-3d) |  | -184.02d → -182d |
| RHD4CZ6C062IRR2402 | Backfilling works for Valve Chamber for Irrigation Network - (RD-C-6 /2)-Z6-C062-IRR | 2027-08-26 → 2027-08-24 (-2d) | 2027-08-29 → 2027-08-25 (-4d) |  | -184.02d → -182d |
| 5364 | **RHD4-02-002-C062-(IRR)-Air Valves** | 2027-08-26 → 2027-08-24 (-2d) | 2027-08-31 → 2027-08-28 (-3d) |  |  |
| RHD4CZ6C062IRR3103 | Installation for Air Valves for Irrigation Network - (RD-C-6 /2)-Z6-C062-IRR | 2027-08-26 → 2027-08-24 (-2d) | 2027-08-29 → 2027-08-25 (-4d) |  | -184.02d → -182d |
| RHD4CZ6C062IRR3203 | Stem and Service box for Air Valves for Irrigation Network - (RD-C-6 /2)-Z6-C062-IRR | 2027-08-29 → 2027-08-26 (-3d) | 2027-08-31 → 2027-08-28 (-3d) |  | -184.02d → -182d |
| 6115 | **RHD4-02-002-C062-(IRR)-Gate Valves (Direct Buried)** | 2027-07-27 → 2027-07-25 (-2d) | 2027-08-01 → 2027-07-28 (-4d) |  |  |
| RHD4CZ6C062IRR3100 | Installation for Direct Buried Gate Valves - (RD-C-6 /2)-Z6-C062-IRR | 2027-07-27 → 2027-07-25 (-2d) | 2027-07-29 → 2027-07-26 (-3d) |  | -154.02d → -152d |
| RHD4CZ6C062IRR3200 | Stem and Service box for Direct Buried Gate Valves - (RD-C-6 /2)-Z6-C062-IRR | 2027-07-29 → 2027-07-27 (-2d) | 2027-08-01 → 2027-07-28 (-4d) |  | -154.02d → -152d |
| 5383 | **RHD4-02-002-Z6-C062-Medium Voltage Network - MV** | 2027-03-08 → 2027-03-02 (-6d) | 2027-05-05 → 2027-05-04 (-1d) |  |  |
| 5384 | **RHD4-02-002-C062-(MV)-Medium Voltage cable trench** | 2027-04-03 → 2027-04-01 (-2d) | 2027-04-20 → 2027-04-19 (-1d) |  |  |
| RHD4CZ6C062MV1100 | Excavation for Medium Voltage Trench - (RD-C-6 /2)-Z6-C062-MV | 2027-04-03 → 2027-04-01 (-2d) | 2027-04-11 → 2027-04-10 (-1d) |  | -172d → -171d |
| RHD4CZ6C062MV1200 | Trench Backfilling for Medium Voltage Network - (RD-C-6 /2)-Z6-C062-MV | 2027-04-12 → 2027-04-11 (-1d) | 2027-04-20 → 2027-04-19 (-1d) |  | -169d → -168d |
| 5385 | **RHD4-02-002-C062-(MV)-Medium Voltage duct banks** | 2027-03-08 → 2027-03-02 (-6d) | 2027-03-20 → 2027-03-14 (-6d) |  |  |
| RHD4CZ6C062MV2100 | Excavation of Duct Banks for Medium Voltage Network - (RD-C-6 /2)-Z6-C062-MV | 2027-03-08 → 2027-03-02 (-6d) | 2027-03-13 → 2027-03-03 (-10d) |  | -167d → -162d |
| RHD4CZ6C062MV2200 | Installation of Duct Banks for Medium Voltage Network - (RD-C-6 /2)-Z6-C062-MV | 2027-03-14 → 2027-03-04 (-10d) | 2027-03-15 → 2027-03-06 (-9d) |  | -167d → -162d |
| RHD4CZ6C062MV2300 | Pouring of Duct Banks for Medium Voltage Network - (RD-C-6 /2)-Z6-C062-MV | 2027-03-16 → 2027-03-07 (-9d) | 2027-03-17 → 2027-03-08 (-9d) |  | -167d → -162d |
| RHD4CZ6C062MV2400 | Backfilling of Duct Banks for Medium Voltage Network - (RD-C-6 /2)-Z6-C062-MV | 2027-03-18 → 2027-03-13 (-5d) | 2027-03-20 → 2027-03-14 (-6d) |  | -167d → -162d |
| 5386 | **RHD4-02-002-C062-(MV)-Medium Voltage cables 3Cx 500 mm²** | 2027-04-12 → 2027-04-11 (-1d) | 2027-05-05 → 2027-05-04 (-1d) |  |  |
| RHD4CZ6C062MV3100 | Installation of Medium Voltage Cables 3Cx 500 mm² - (RD-C-6 /2)-Z6-C062-MV | 2027-04-12 → 2027-04-11 (-1d) | 2027-04-20 → 2027-04-19 (-1d) |  | -172d → -171d |
| RHD4CZ6C062MV3200 | Joints Installation of Medium Voltage Cables 3Cx 500 mm² - (RD-C-6 /2)-Z6-C062-MV | 2027-04-21 → 2027-04-20 (-1d) | 2027-04-24 → 2027-04-22 (-2d) |  | -172d → -171d |
| RHD4CZ6C062MV3300 | Testing of Medium Voltage Cables 3Cx 500 mm² - (RD-C-6 /2)-Z6-C062-MV | 2027-04-25 → 2027-04-24 (-1d) | 2027-05-03 → 2027-05-02 (-1d) |  | -172d → -171d |
| RHD4CZ6C062MV3400 | Termination of Medium Voltage Cables 3Cx 500 mm² - (RD-C-6 /2)-Z6-C062-MV | 2027-05-04 → 2027-05-03 (-1d) | 2027-05-05 → 2027-05-04 (-1d) |  | -172d → -171d |
| 5387 | **RHD4-02-002-C062-(MV)-Medium Voltage cables 3Cx 50 mm²** | 2027-05-04 → 2027-05-03 (-1d) | 2027-05-05 → 2027-05-04 (-1d) |  |  |
| RHD4CZ6C062MV3401 | Termination of Medium Voltage Cables 3Cx 50 mm² - (RD-C-6 /2)-Z6-C062-MV | 2027-05-04 → 2027-05-03 (-1d) | 2027-05-05 → 2027-05-04 (-1d) |  | -172d → -171d |
| 5390 | **RHD4-02-002-Z6-C062-Low Voltage Network - LV** | 2027-08-19 → 2027-08-17 (-2d) | 2027-09-15 → 2027-09-12 (-3d) |  |  |
| 5391 | **RHD4-02-002-C062-(LV)-Low Voltage duct banks** | 2027-08-19 → 2027-08-17 (-2d) | 2027-08-30 → 2027-08-26 (-4d) |  |  |
| RHD4CZ6C062LV2100 | Excavation of Duct Banks for Low Voltage Network - (RD-C-6 /2)-Z6-C062-LV | 2027-08-19 → 2027-08-17 (-2d) | 2027-08-22 → 2027-08-18 (-4d) |  | -192.02d → -190d |
| RHD4CZ6C062LV2200 | Installation of Duct Banks for Low Voltage Network - (RD-C-6 /2)-Z6-C062-LV | 2027-08-22 → 2027-08-19 (-3d) | 2027-08-25 → 2027-08-22 (-3d) |  | -192.02d → -190d |
| RHD4CZ6C062LV2300 | Pouring of Duct Banks for Low Voltage Network - (RD-C-6 /2)-Z6-C062-LV | 2027-08-25 → 2027-08-23 (-2d) | 2027-08-28 → 2027-08-24 (-4d) |  | -192.02d → -190d |
| RHD4CZ6C062LV2400 | Backfilling of Duct Banks for Low Voltage Network - (RD-C-6 /2)-Z6-C062-LV | 2027-08-28 → 2027-08-25 (-3d) | 2027-08-30 → 2027-08-26 (-4d) |  | -190.02d → -188d |
| 5392 | **RHD4-02-002-C062-(LV)-Low Voltage Drawpit** | 2027-08-28 → 2027-08-25 (-3d) | 2027-09-01 → 2027-08-29 (-3d) |  |  |
| RHD4CZ6C062LV5100 | Excavation of Drawpit size 900x900x1000mm for Low Voltage Network - (RD-C-6 /2)-Z6-C062-LV | 2027-08-28 → 2027-08-25 (-3d) | 2027-08-30 → 2027-08-26 (-4d) |  | -192.02d → -190d |
| RHD4CZ6C062LV5200 | Installation of Drawpit size 900x900x1000mm for Low Voltage Network - (RD-C-6 /2)-Z6-C062-LV | 2027-08-30 → 2027-08-28 (-2d) | 2027-09-01 → 2027-08-29 (-3d) |  | -192.02d → -190d |
| 5393 | **RHD4-02-002-C062-(LV)-Low Voltage cables** | 2027-09-01 → 2027-08-30 (-2d) | 2027-09-15 → 2027-09-12 (-3d) |  |  |
| RHD4CZ6C062LV3100 | Excavation for Low Voltage Cables for Low Voltage Network - (RD-C-6 /2)-Z6-C062-LV | 2027-09-01 → 2027-08-30 (-2d) | 2027-09-06 → 2027-09-02 (-4d) |  | -192.02d → -190d |
| RHD4CZ6C062LV3200 | Cable Laying of Low Voltage Cables for Low Voltage Network - (RD-C-6 /2)-Z6-C062-LV | 2027-09-06 → 2027-09-04 (-2d) | 2027-09-09 → 2027-09-06 (-3d) |  | -192.02d → -190d |
| RHD4CZ6C062LV3300 | Warning tape and Backfill for Low Voltage Cables for Low Voltage Network - (RD-C-6 /2)-Z6-C062-LV | 2027-09-09 → 2027-09-07 (-2d) | 2027-09-13 → 2027-09-09 (-4d) |  | -192.02d → -190d |
| RHD4CZ6C062LV3400 | Testing of Low Voltage Cables for Low Voltage Network - (RD-C-6 /2)-Z6-C062-LV | 2027-09-13 → 2027-09-11 (-2d) | 2027-09-15 → 2027-09-12 (-3d) |  | -192.02d → -190d |
| 5396 | **RHD4-02-002-Z6-C062-Street Lighting Network - SL** | 2027-09-15 → 2027-09-13 (-2d) | 2027-10-17 → 2027-10-13 (-4d) |  |  |
| 5399 | **RHD4-02-002-C062-(SL)-Street Lighting cables** | 2027-09-15 → 2027-09-13 (-2d) | 2027-09-29 → 2027-09-26 (-3d) |  |  |
| RHD4CZ6C062SL3100 | Excavation for Street Lighting Cables for Street Lighting Network - (RD-C-6 /2)-Z6-C062-SL | 2027-09-15 → 2027-09-13 (-2d) | 2027-09-19 → 2027-09-15 (-4d) |  | -191.02d → -189d |
| RHD4CZ6C062SL3200 | Cable Laying of Street Lighting Cables for Street Lighting Network - (RD-C-6 /2)-Z6-C062-SL | 2027-09-19 → 2027-09-16 (-3d) | 2027-09-22 → 2027-09-19 (-3d) |  | -191.02d → -189d |

| ID | Task | Start | Finish | Total float |
| --- | --- | --- | --- | --- |
| RHD4CZ6C062SL3300 | Warning tape and Backfill for Street Lighting Cables for Street Lighting Network - (RD-C-6 /2)-Z6-C062-SL | 2027-09-22 → 2027-09-20 (-2d) | 2027-09-27 → 2027-09-22 (-5d) | -191.02d → -189d |
| RHD4CZ6C062SL3400 | Testing of Street Lighting Cables for Street Lighting Network - (RD-C-6 /2)-Z6-C062-SL | 2027-09-27 → 2027-09-25 (-2d) | 2027-09-29 → 2027-09-26 (-3d) | -191.02d → -189d |
| 5400 | **RHD4-02-002-C062-(SL)-Street Lighting Poles** | 2027-09-29 → 2027-09-27 (-2d) | 2027-10-17 → 2027-10-13 (-4d) |  |
| RHD4CZ6C062SL1100 | Excavation for RC Base for Lighting Poles for Street Lighting Network - (RD-C-6 /2)-Z6-C062-SL | 2027-09-29 → 2027-09-27 (-2d) | 2027-10-02 → 2027-09-28 (-4d) | -191.02d → -189d |
| RHD4CZ6C062SL1200 | Installation for RC Base for Lighting Poles for Street Lighting Network - (RD-C-6 /2)-Z6-C062-SL | 2027-10-02 → 2027-09-29 (-3d) | 2027-10-04 → 2027-09-30 (-4d) | -191.02d → -189d |
| RHD4CZ6C062SL1300 | Backfill for RC Base for Lighting Poles for Street Lighting Network - (RD-C-6 /2)-Z6-C062-SL | 2027-10-04 → 2027-10-02 (-2d) | 2027-10-06 → 2027-10-03 (-3d) | -191.02d → -189d |
| RHD4CZ6C062SL1400 | Installation for Lighting Poles for Street Lighting Network - (RD-C-6 /2)-Z6-C062-SL | 2027-10-06 → 2027-10-04 (-2d) | 2027-10-10 → 2027-10-06 (-4d) | -191.02d → -189d |
| RHD4CZ6C062SL1500 | Luminaire Installation for Lighting Poles for Street Lighting Network - (RD-C-6 /2)-Z6-C062-SL | 2027-10-12 → 2027-10-10 (-2d) | 2027-10-17 → 2027-10-13 (-4d) | -191.02d → -189d |
| 5402 | **RHD4-02-002-C062-(SL)-Street Lighting Earthing System** | 2027-10-10 → 2027-10-07 (-3d) | 2027-10-12 → 2027-10-09 (-3d) |  |
| RHD4CZ6C062SL6100 | Installation of Earthing for Lighting Poles and Fedder Pillers for Street Lighting Network - (RD-C-6 /2)-Z6-C062-SL | 2027-10-10 → 2027-10-07 (-3d) | 2027-10-12 → 2027-10-09 (-3d) | -191.02d → -189d |
| 5408 | **RHD4-02-002-Z6-C062-Telecommunications Network - TC** | 2027-08-19 → 2027-08-17 (-2d) | 2027-11-30 → 2027-11-27 (-3d) |  |
| 5409 | **RHD4-02-002-C062-(TC)-Telecommunications Ducts** | 2027-10-17 → 2027-10-14 (-3d) | 2027-11-30 → 2027-11-27 (-3d) |  |
| RHD4CZ6C062TC2100 | Excavation of HDPE Ducts for Telecom Network - (RD-C-6 /2)-Z6-C062-TC | 2027-10-17 → 2027-10-14 (-3d) | 2027-10-30 → 2027-10-26 (-4d) | -191.02d → -189d |
| RHD4CZ6C062TC2200 | Installation of HDPE Ducts for Telecom Network - (RD-C-6 /2)-Z6-C062-TC | 2027-10-30 → 2027-10-27 (-3d) | 2027-11-17 → 2027-11-14 (-3d) | -191.02d → -189d |
| RHD4CZ6C062TC2400 | Backfilling of HDPE Ducts for Telecom Network - (RD-C-6 /2)-Z6-C062-TC | 2027-11-17 → 2027-11-15 (-2d) | 2027-11-30 → 2027-11-27 (-3d) | -191.02d → -189d |
| 5410 | **RHD4-02-002-C062-(TC)-Telecommunications Manholes** | 2027-10-30 → 2027-10-27 (-3d) | 2027-11-08 → 2027-11-04 (-4d) |  |
| RHD4CZ6C062TC5100 | Excavation for Manholes for Telecom Network - (RD-C-6 /2)-Z6-C062-TC | 2027-10-30 → 2027-10-27 (-3d) | 2027-11-03 → 2027-10-31 (-3d) | -183.02d → -181d |
| RHD4CZ6C062TC5200 | Installation of Manholes for Telecom Network - (RD-C-6 /2)-Z6-C062-TC | 2027-11-03 → 2027-11-01 (-2d) | 2027-11-08 → 2027-11-04 (-4d) | -183.02d → -181d |
| 5411 | **RHD4-02-002-C062-(TC)-Telecomminications Road Crossings** | 2027-08-19 → 2027-08-17 (-2d) | 2027-08-29 → 2027-08-25 (-4d) |  |
| RHD4CZ6C062TC3100 | Excavation for Road Crossings for Telecom Network - (RD-C-6 /2)-Z6-C062-TC | 2027-08-19 → 2027-08-17 (-2d) | 2027-08-22 → 2027-08-18 (-4d) | -190.02d → -188d |
| RHD4CZ6C062TC3200 | Installation of Road Crossings for Telecom Network - (RD-C-6 /2)-Z6-C062-TC | 2027-08-22 → 2027-08-19 (-3d) | 2027-08-24 → 2027-08-21 (-3d) | -190.02d → -188d |
| RHD4CZ6C062TC3300 | Pouring of Road Crossings for Telecom Network - (RD-C-6 /2)-Z6-C062-TC | 2027-08-24 → 2027-08-22 (-2d) | 2027-08-26 → 2027-08-23 (-3d) | -190.02d → -188d |
| RHD4CZ6C062TC3400 | Backfilling of Road Crossings for Telecom Network - (RD-C-6 /2)-Z6-C062-TC | 2027-08-26 → 2027-08-24 (-2d) | 2027-08-29 → 2027-08-25 (-4d) | -190.02d → -188d |
| 5412 | **RHD4-02-002-Z6-C062-Information and Communication Technologies - ICT** | 2027-08-19 → 2027-08-17 (-2d) | 2028-01-10 → 2028-01-06 (-4d) |  |
| 5413 | **RHD4-02-002-C062-(ICT)-Information and Communication Technologies Ducts** | 2027-11-30 → 2027-11-28 (-2d) | 2028-01-10 → 2028-01-06 (-4d) |  |
| RHD4CZ6C062ICT2100 | Excavation of HDPE Ducts for ICT Network - (RD-C-6 /2)-Z6-C062-ICT | 2027-11-30 → 2027-11-28 (-2d) | 2027-12-12 → 2027-12-08 (-4d) | -190.02d → -188d |
| RHD4CZ6C062ICT2200 | Installation of HDPE Ducts for ICT Network - (RD-C-6 /2)-Z6-C062-ICT | 2027-12-12 → 2027-12-09 (-3d) | 2027-12-29 → 2027-12-26 (-3d) | -190.02d → -188d |
| RHD4CZ6C062ICT2400 | Backfilling of HDPE Ducts for ICT Network - (RD-C-6 /2)-Z6-C062-ICT | 2027-12-29 → 2027-12-27 (-2d) | 2028-01-10 → 2028-01-06 (-4d) | -190.02d → -188d |
| 5414 | **RHD4-02-002-C062-(ICT)-Information and Communication Technologies Manholes** | 2027-12-12 → 2027-12-09 (-3d) | 2027-12-21 → 2027-12-18 (-3d) |  |
| RHD4CZ6C062ICT5100 | Excavation for Manholes for ICT Network - (RD-C-6 /2)-Z6-C062-ICT | 2027-12-12 → 2027-12-09 (-3d) | 2027-12-16 → 2027-12-13 (-3d) | -183.02d → -181d |
| RHD4CZ6C062ICT5200 | Installation of Manholes for ICT Network - (RD-C-6 /2)-Z6-C062-ICT | 2027-12-16 → 2027-12-14 (-2d) | 2027-12-21 → 2027-12-18 (-3d) | -183.02d → -181d |
| 5415 | **RHD4-02-002-C062-(ICT)-Information and Communication Technologies Road Crossings** | 2027-08-19 → 2027-08-17 (-2d) | 2027-08-31 → 2027-08-28 (-3d) |  |
| RHD4CZ6C062ICT3100 | Excavation for Road Crossings for ICT Network - (RD-C-6 /2)-Z6-C062-ICT | 2027-08-19 → 2027-08-17 (-2d) | 2027-08-22 → 2027-08-18 (-4d) | -188.02d → -186d |
| RHD4CZ6C062ICT3200 | Installation of Road Crossings for ICT Network - (RD-C-6 /2)-Z6-C062-ICT | 2027-08-24 → 2027-08-22 (-2d) | 2027-08-26 → 2027-08-23 (-3d) | -190.02d → -188d |
| RHD4CZ6C062ICT3300 | Pouring of Road Crossings for ICT Network - (RD-C-6 /2)-Z6-C062-ICT | 2027-08-26 → 2027-08-24 (-2d) | 2027-08-29 → 2027-08-25 (-4d) | -190.02d → -188d |
| RHD4CZ6C062ICT3400 | Backfilling of Road Crossings for ICT Network - (RD-C-6 /2)-Z6-C062-ICT | 2027-08-29 → 2027-08-26 (-3d) | 2027-08-31 → 2027-08-28 (-3d) | -190.02d → -188d |
| 4677 | **RHD4-02-002-Z6-A015** |  | 2028-02-01 → 2028-01-29 (-3d) |  |
| 4856 | **RHD4-02-002-Z6-A015-Road Works - RD** |  | 2028-02-01 → 2028-01-29 (-3d) |  |
| 4859 | **RHD4-02-002-A015-(RD)-Bituminous base course Two Layers, including (MC1)&(RC2)** |  | 2028-01-12 → 2028-01-09 (-3d) |  |
| RHD4CZ6A015RD3200 | Supply, lay and Asphaltic base course including Tack Coat (RC2) for 2nd Layer - (RD-A-1 /5)-Z6-A015-RD | 2028-01-08 → 2028-01-05 (-3d) | 2028-01-12 → 2028-01-09 (-3d) | -191.02d → -189d |
| 4861 | **RHD4-02-002-A015-(RD)-Precast Concrete Curb** | 2028-01-12 → 2028-01-10 (-2d) | 2028-01-20 → 2028-01-17 (-3d) |  |
| RHD4CZ6A015RD5100 | Supply and installation Precast Concrete Kerb for Roads - (RD-A-1 /5)-Z6-A015-RD | 2028-01-12 → 2028-01-10 (-2d) | 2028-01-20 → 2028-01-17 (-3d) | -191.02d → -189d |
| 4864 | **RHD4-02-002-A015-(RD)-Traffic Signage** | 2028-01-20 → 2028-01-18 (-2d) | 2028-01-27 → 2028-01-24 (-3d) |  |
| RHD4CZ6A015RD8100 | Installation of Traffic Signage for Road Network - (RD-A-1 /5)-Z6-A015-RD | 2028-01-20 → 2028-01-18 (-2d) | 2028-01-27 → 2028-01-24 (-3d) | -191.02d → -189d |
| 4860 | **RHD4-02-002-A015-(RD)-Bituminous concrete wearing course including tack coat (RC2)** | 2028-01-20 → 2028-01-18 (-2d) | 2028-01-23 → 2028-01-19 (-4d) |  |
| RHD4CZ6A015RD4100 | Supply, lay and compaction Asphaltic wearing course including tack Coat (RC2)for Road Network - (RD-A-1 /5)-Z6-A015-RD | 2028-01-20 → 2028-01-18 (-2d) | 2028-01-23 → 2028-01-19 (-4d) | -187.02d → -185d |
| 4863 | **RHD4-02-002-A015-(RD)-Pavement Marking** | 2028-01-27 → 2028-01-25 (-2d) | 2028-02-01 → 2028-01-29 (-3d) |  |
| RHD4CZ6A015RD7100 | Pavement Markings for Road Network - (RD-A-1 /5)-Z6-A015-RD | 2028-01-27 → 2028-01-25 (-2d) | 2028-02-01 → 2028-01-29 (-3d) | -191.02d → -189d |
| 4681 | **RHD4-02-002-Z6-A015-Storm Network - ST** |  | 2027-04-04 → 2027-03-31 (-4d) |  |
| 4699 | **RHD4-02-002-A015-(ST)-MH Works - 1500 mm diameter** |  | 2027-01-20 → 2027-01-21 (+1d) |  |
| RHD4CZ6A015ST3401 | Steel Cover for MH 1500 mm - (RD-A-1 /5)-Z6-A015-ST | 2027-01-17 → 2027-01-18 (+1d) | 2027-01-18 → 2027-01-19 (+1d) | -194d → -190d |
| RHD4CZ6A015ST3501 | Finishing, Benching, Testing works for MH 1500 mm - (RD-A-1 /5)-Z6-A015-ST | 2027-01-19 → 2027-01-20 (+1d) | 2027-01-20 → 2027-01-21 (+1d) | -194d → -190d |
| 4698 | **RHD4-02-002-A015-(ST)-MH Works - 1200 mm diameter** |  | 2027-04-04 → 2027-03-31 (-4d) |  |
| RHD4CZ6A015ST3400 | Steel Cover for MH 1200 mm - (RD-A-1 /5)-Z6-A015-ST | 2027-03-23 → 2027-03-20 (-3d) | 2027-03-29 → 2027-03-25 (-4d) | -147.04d → -144.02d |
| RHD4CZ6A015ST3500 | Finishing, Benching, Testing works for MH 1200 mm - (RD-A-1 /5)-Z6-A015-ST | 2027-03-29 → 2027-03-25 (-4d) | 2027-04-04 → 2027-03-31 (-4d) | -147.04d → -144.02d |
| 4685 | **RHD4-02-002-A015-(ST)-GRP Pipes - 700 mm diameter** |  | 2026-12-28 → 2027-01-04 (+7d) |  |
| RHD4CZ6A015ST1403 | Primary Test for GRP Pipe Line 700 mm - (RD-A-1 /5)-Z6-A015-ST | 2026-12-27 → 2027-01-03 (+7d) | 2026-12-28 → 2027-01-04 (+7d) | -187d → -191d |
| 4684 | **RHD4-02-002-A015-(ST)-GRP Pipes - 600 mm diameter** |  | 2026-12-28 → 2027-01-04 (+7d) |  |
| RHD4CZ6A015ST1402 | Primary Test for GRP Pipe Line 600 mm - (RD-A-1 /5)-Z6-A015-ST | 2026-12-27 → 2027-01-03 (+7d) | 2026-12-28 → 2027-01-04 (+7d) | -187d → -191d |
| 4683 | **RHD4-02-002-A015-(ST)-GRP Pipes - 500 mm diameter** |  | 2026-12-28 → 2027-01-04 (+7d) |  |
| RHD4CZ6A015ST1401 | Primary Test for GRP Pipe Line 500 mm - (RD-A-1 /5)-Z6-A015-ST | 2026-12-27 → 2027-01-03 (+7d) | 2026-12-28 → 2027-01-04 (+7d) | -187d → -191d |
| 4682 | **RHD4-02-002-A015-(ST)-GRP Pipes - 400 mm diameter** |  | 2027-01-16 → 2027-01-17 (+1d) |  |
| RHD4CZ6A015ST1100 | Excavation works for GRP Pipe Line 400 mm - (RD-A-1 /5)-Z6-A015-ST |  | 2026-12-30 → 2027-01-04 (+5d) | -194d → -190d |
| RHD4CZ6A015ST1200 | Bedding works for GRP Pipe Line 400 mm - (RD-A-1 /5)-Z6-A015-ST |  | 2027-01-03 → 2027-01-07 (+4d) | -194d → -190d |
| RHD4CZ6A015ST1300 | Installing for GRP Pipe Line 400 mm - (RD-A-1 /5)-Z6-A015-ST |  | 2027-01-09 → 2027-01-10 (+1d) | -194d → -190d |
| RHD4CZ6A015ST1500 | Backfilling and warning tape works for GRP Pipe Line 400 mm - (RD-A-1 /5)-Z6-A015-ST |  | 2027-01-16 → 2027-01-17 (+1d) | -194d → -190d |
| RHD4CZ6A015ST1400 | Primary Test for GRP Pipe Line 400 mm - (RD-A-1 /5)-Z6-A015-ST | 2027-01-10 → 2027-01-11 (+1d) | 2027-01-11 → 2027-01-12 (+1d) | -194d → -190d |
| 4696 | **RHD4-02-002-A015-(ST)-UPVC Pipes - 300 mm diameter** |  | 2026-12-30 → 2027-01-06 (+7d) |  |
| RHD4CZ6A015ST2400 | Primary Test for UPVC Pipe Line 300 mm - (RD-A-1 /5)-Z6-A015-ST | 2026-12-29 → 2027-01-05 (+7d) | 2026-12-30 → 2027-01-06 (+7d) | -187d → -191d |
| 4704 | **RHD4-02-002-A015-(ST)-Concrete Encasement** |  | 2026-12-30 → 2027-01-06 (+7d) |  |

| ID | Task | Start | Finish | Complete | Total float |
| --- | --- | --- | --- | --- | --- |
| RHD4CZ6A015ST6100 | Pipe Encasement for Storm Pipelines - (RD-A-1 /5)-Z6-A015-ST |  | 2026-12-30 → 2027-01-06 (+7d) |  | -187d → -191d |
| 4705 | **RHD4-02-002-Z6-A015-Catch Basin - ST** |  | 2027-05-12 → 2027-05-11 (-1d) |  |  |
| 4706 | **RHD4-02-002-A015-(ST)-Single Catch Basin Works** |  | 2027-05-12 → 2027-05-11 (-1d) |  |  |
| RHD4CZ6A015ST7400 | Steel Cover for Single Catch Basin - (RD-A-1 /5)-Z6-A015-ST | 2027-04-07 → 2027-04-04 (-3d) | 2027-04-11 → 2027-04-06 (-5d) |  | -110.02d → -107d |
| RHD4CZ6A015ST7500 | Finishing and Insulation works for Single Catch Basin - (RD-A-1 /5)-Z6-A015-ST | 2027-05-06 → 2027-05-05 (-1d) | 2027-05-12 → 2027-05-11 (-1d) |  | -132d → -131d |
| 4299 | **RHD4-02-002-Z6-A015-Concrete Box Culvert - ST** |  | 2027-01-25 → 2027-01-26 (+1d) |  |  |
| 4301 | **RHD4-02-002-A015-(ST)-Concrete Chambers** | 2026-08-20 → 2027-01-18 (+151d) | 2027-01-25 → 2027-01-26 (+1d) |  |  |
| RHD4CZ6A015ST5100 | Excavation and Bedding for Concrete Chambers - for Box Culvert - (RD-A-1/5)-Z6-A015-ST | 2026-08-20 A → 2027-01-18 (+151d) | 2027-01-18 → 2027-01-19 (+1d) | 50% → 0% | -150d → -151d |
| RHD4CZ6A015ST5200 | PC works for Concrete Chambers - for Box Culvert - (RD-A-1/5)-Z6-A015-ST | 2026-08-25 A → 2027-01-20 (+148d) | 2027-01-20 → 2027-01-21 (+1d) | 50% → 0% | -150d → -151d |
| RHD4CZ6A015ST5300 | Installation for Concrete Chambers - for Box Culvert - (RD-A-1/5)-Z6-A015-ST | 2026-08-30 A → 2027-01-23 (+146d) | 2027-01-23 → 2027-01-24 (+1d) | 50% → 0% | -150d → -151d |
| RHD4CZ6A015ST5400 | Backfilling works for Concrete Chambers - for Box Culvert - (RD-A-1/5)-Z6-A015-ST | 2027-01-24 → 2027-01-25 (+1d) | 2027-01-25 → 2027-01-26 (+1d) |  | -150d → -151d |
| 4767 | **RHD4-02-002-Z6-A015-Potable Network - PT** | 2026-12-31 → 2026-10-25 (-67d) | 2027-03-28 → 2027-03-24 (-4d) |  |  |
| 1745 | **RHD4-02-002-C011-(PT)-HDPE Pipes - 450 mm diameter** | 2026-12-31 → 2027-01-07 (+7d) | 2027-01-21 → 2027-01-28 (+7d) |  |  |
| RHD4CZ6A015PT1104 | Excavation works for HDPE Pipline 450 mm - (RD-A-1 /5)-Z6-A015-PT | 2026-12-31 → 2027-01-07 (+7d) | 2027-01-04 → 2027-01-11 (+7d) |  | -187d → -191d |
| RHD4CZ6A015PT1204 | Bedding works for HDPE Pipline 450 mm - (RD-A-1 /5)-Z6-A015-PT | 2027-01-05 → 2027-01-12 (+7d) | 2027-01-07 → 2027-01-14 (+7d) |  | -187d → -191d |
| RHD4CZ6A015PT1304 | Installing for HDPE Pipline 450 mm - (RD-A-1 /5)-Z6-A015-PT | 2027-01-09 → 2027-01-16 (+7d) | 2027-01-14 → 2027-01-21 (+7d) |  | -187d → -191d |
| RHD4CZ6A015PT1404 | Primary Test for HDPE Pipline 450 mm - (RD-A-1 /5)-Z6-A015-PT | 2027-01-14 → 2027-01-21 (+7d) | 2027-01-17 → 2027-01-24 (+7d) |  | -187d → -191d |
| RHD4CZ6A015PT1504 | Backfilling and warning tape works for HDPE Pipline 450 mm - (RD-A-1 /5)-Z6-A015-PT | 2027-01-17 → 2027-01-24 (+7d) | 2027-01-21 → 2027-01-28 (+7d) |  | -187d → -191d |
| 4770 | **RHD4-02-002-A015-(PT)-HDPE Pipes - 200 mm diameter** | 2027-02-24 → 2026-10-25 (-122d) | 2027-03-16 → 2027-03-13 (-3d) |  |  |
| RHD4CZ6A015PT1102 | Excavation works for HDPE Pipline 200 mm - (RD-A-1 /5)-Z6-A015-PT | 2027-02-24 → 2026-10-25 A (-122d) | 2027-02-28 → 2027-02-23 (-5d) | 0% → 1% | -147.04d → -144.02d |
| RHD4CZ6A015PT1202 | Bedding works for HDPE Pipline 200 mm - (RD-A-1 /5)-Z6-A015-PT | 2027-02-28 → 2026-10-27 A (-124d) | 2027-03-02 → 2027-02-25 (-5d) | 0% → 1% | -147.04d → -144.02d |
| RHD4CZ6A015PT1302 | Installing for HDPE Pipline 200 mm - (RD-A-1 /5)-Z6-A015-PT | 2027-03-02 → 2026-10-29 A (-124d) | 2027-03-07 → 2027-03-02 (-5d) | 0% → 1% | -147.04d → -144.02d |
| RHD4CZ6A015PT1502 | Backfilling and warning tape works for HDPE Pipline 200 mm - (RD-A-1 /5)-Z6-A015-PT | 2027-03-13 → 2026-10-31 A (-133d) | 2027-03-16 → 2027-03-13 (-3d) | 0% → 1% | -147.04d → -144.02d |
| RHD4CZ6A015PT1402 | Primary Test for HDPE Pipline 200 mm - (RD-A-1 /5)-Z6-A015-PT | 2027-03-07 → 2027-03-03 (-4d) | 2027-03-13 → 2027-03-04 (-9d) |  | -147.02d → -144d |
| 4776 | **RHD4-02-002-A015-(PT)-Wash out Valve Chambers** | 2027-03-16 → 2027-03-13 (-3d) | 2027-03-25 → 2027-03-22 (-3d) |  |  |
| RHD4CZ6A015PT2101 | Excavation and Bedding for Wash out Valve Chambers for Potable Water Network - (RD-A-1 /5)-Z6-A015-PT | 2027-03-16 → 2027-03-13 (-3d) | 2027-03-18 → 2027-03-15 (-3d) |  | -106.04d → -103.02d |
| RHD4CZ6A015PT2201 | PC works for Wash out Valve Chambers for Potable Water Network - (RD-A-1 /5)-Z6-A015-PT | 2027-03-18 → 2027-03-15 (-3d) | 2027-03-21 → 2027-03-17 (-4d) |  | -106.04d → -103.02d |
| RHD4CZ6A015PT2301 | Installation for Wash out Valve Chambers for Potable Water Network - (RD-A-1 /5)-Z6-A015-PT | 2027-03-21 → 2027-03-17 (-4d) | 2027-03-23 → 2027-03-20 (-3d) |  | -106.04d → -103.02d |
| RHD4CZ6A015PT2401 | Backfilling works for Wash out Valve Chambers for Potable Water Network - (RD-A-1 /5)-Z6-A015-PT | 2027-03-23 → 2027-03-20 (-3d) | 2027-03-25 → 2027-03-22 (-3d) |  | -106.04d → -103.02d |
| 4777 | **RHD4-02-002-A015-(PT)-Wash out Valves** | 2027-03-23 → 2027-03-20 (-3d) | 2027-03-28 → 2027-03-24 (-4d) |  |  |
| RHD4CZ6A015PT3102 | Installation for Wash out Valves for Potable Water Network - (RD-A-1 /5)-Z6-A015-PT | 2027-03-23 → 2027-03-20 (-3d) | 2027-03-25 → 2027-03-22 (-3d) |  | -106.04d → -103.02d |
| RHD4CZ6A015PT3202 | Stem and Service box for Wash out Valves for Potable Water Network - (RD-A-1 /5)-Z6-A015-PT | 2027-03-25 → 2027-03-22 (-3d) | 2027-03-28 → 2027-03-24 (-4d) |  | -106.04d → -103.02d |
| 4780 | **RHD4-02-002-A015-(PT)-Fire Hydrant** | 2027-03-16 → 2027-03-13 (-3d) | 2027-03-28 → 2027-03-24 (-4d) |  |  |
| RHD4CZ6A015PT4100 | Excavation and Bedding and Pipe Installation for Fire Hydrant - (RD-A-1 /5)-Z6-A015-PT | 2027-03-16 → 2027-03-13 (-3d) | 2027-03-18 → 2027-03-15 (-3d) |  | -147.04d → -144.02d |
| RHD4CZ6A015PT4200 | Valve Installation for Fire Hydrant - (RD-A-1 /5)-Z6-A015-PT | 2027-03-18 → 2027-03-15 (-3d) | 2027-03-21 → 2027-03-17 (-4d) |  | -147.04d → -144.02d |
| RHD4CZ6A015PT4300 | Stem for Fire Hydrant - (RD-A-1 /5)-Z6-A015-PT | 2027-03-21 → 2027-03-17 (-4d) | 2027-03-23 → 2027-03-20 (-3d) |  | -147.04d → -144.02d |
| RHD4CZ6A015PT4400 | Fire Installation for Fire Hydrant - (RD-A-1 /5)-Z6-A015-PT | 2027-03-23 → 2027-03-20 (-3d) | 2027-03-25 → 2027-03-22 (-3d) |  | -106.04d → -103.02d |
| RHD4CZ6A015PT4500 | Protection Barriers for Fire Hydrant - (RD-A-1 /5)-Z6-A015-PT | 2027-03-25 → 2027-03-22 (-3d) | 2027-03-28 → 2027-03-24 (-4d) |  | -106.04d → -103.02d |
| 4781 | **RHD4-02-002-A015-(PT)-Concrete Encasement** | 2027-03-07 → 2027-03-03 (-4d) | 2027-03-13 → 2027-03-06 (-7d) |  |  |
| RHD4CZ6A015PT5100 | Pipe Encasement for Potable Pipelines - (RD-A-1 /5)-Z6-A015-PT | 2027-03-07 → 2027-03-03 (-4d) | 2027-03-13 → 2027-03-06 (-7d) |  | -147.04d → -144.02d |
| 4773 | **RHD4-02-002-A015-(PT)-Gate Valves (Direct Buried)** | 2027-03-04 → 2027-03-01 (-3d) | 2027-03-18 → 2027-03-15 (-3d) |  |  |
| RHD4CZ6A015PT3100 | Installation for Direct Buried Gate Valves - (RD-A-1 /5)-Z6-A015-PT | 2027-03-04 → 2027-03-01 (-3d) | 2027-03-07 → 2027-03-02 (-5d) |  | -93.02d → -90d |
| RHD4CZ6A015PT3200 | Stem and Service box for Direct Buried Gate Valves - (RD-A-1 /5)-Z6-A015-PT | 2027-03-16 → 2027-03-13 (-3d) | 2027-03-18 → 2027-03-15 (-3d) |  | -98.04d → -95.02d |
| 4782 | **RHD4-02-002-Z6-A015-Irrigation Network - IRR** |  | 2027-04-14 → 2027-04-10 (-4d) |  |  |
| 4783 | **RHD4-02-002-A015-(IRR)-HDPE Pipes - 160 mm diameter** |  | 2027-04-03 → 2027-03-29 (-5d) |  |  |
| RHD4CZ6A015IRR1100 | Excavation works for HDPE Pipline 160 mm - (RD-A-1 /5)-Z6-A015-IRR |  | 2027-03-08 → 2027-03-03 (-5d) |  | -146.02d → -143d |
| RHD4CZ6A015IRR1200 | Bedding works for HDPE Pipline 160 mm - (RD-A-1 /5)-Z6-A015-IRR |  | 2027-03-17 → 2027-03-13 (-4d) |  | -112.02d → -109d |
| RHD4CZ6A015IRR1300 | Installing for HDPE Pipline 160 mm - (RD-A-1 /5)-Z6-A015-IRR |  | 2027-03-25 → 2027-03-21 (-4d) |  | -112.02d → -109d |
| RHD4CZ6A015IRR1400 | Primary Test for HDPE Pipline 160 mm - (RD-A-1 /5)-Z6-A015-IRR | 2027-03-25 → 2027-03-22 (-3d) | 2027-03-28 → 2027-03-23 (-5d) |  | -112.02d → -109d |
| RHD4CZ6A015IRR1500 | Backfilling and warning tape works for HDPE Pipline 160 mm - (RD-A-1 /5)-Z6-A015-IRR | 2027-03-28 → 2027-03-24 (-4d) | 2027-04-03 → 2027-03-29 (-5d) |  | -112.02d → -109d |
| 4791 | **RHD4-02-002-A015-(IRR)-Gate Valves (Direct Buried)** | 2027-03-22 → 2027-03-18 (-4d) | 2027-04-06 → 2027-04-01 (-5d) |  |  |
| RHD4CZ6A015IRR3100 | Installation for Direct Buried Gate Valves - (RD-A-1 /5)-Z6-A015-IRR | 2027-03-22 → 2027-03-18 (-4d) | 2027-03-25 → 2027-03-21 (-4d) |  | -112.02d → -109d |
| RHD4CZ6A015IRR3200 | Stem and Service box for Direct Buried Gate Valves - (RD-A-1 /5)-Z6-A015-IRR | 2027-04-03 → 2027-03-30 (-4d) | 2027-04-06 → 2027-04-01 (-5d) |  | -107.02d → -104d |
| 4794 | **RHD4-02-002-A015-(IRR)-Wash out Chamber** | 2027-04-03 → 2027-03-30 (-4d) | 2027-04-12 → 2027-04-07 (-5d) |  |  |
| RHD4CZ6A015IRR2101 | Excavation and Bedding for Wash out Chamber for Irrigation Network - (RD-A-1 /5)-Z6-A015-IRR | 2027-04-03 → 2027-03-30 (-4d) | 2027-04-05 → 2027-03-31 (-5d) |  | -112.02d → -109d |
| RHD4CZ6A015IRR2201 | PC works for Wash out Chamber for Irrigation Network - (RD-A-1 /5)-Z6-A015-IRR | 2027-04-05 → 2027-04-01 (-4d) | 2027-04-07 → 2027-04-03 (-4d) |  | -112.02d → -109d |
| RHD4CZ6A015IRR2301 | Installation for Wash out Chamber for Irrigation Network - (RD-A-1 /5)-Z6-A015-IRR | 2027-04-07 → 2027-04-04 (-3d) | 2027-04-10 → 2027-04-05 (-5d) |  | -112.02d → -109d |
| RHD4CZ6A015IRR2401 | Backfilling works for Wash out Chamber for Irrigation Network - (RD-A-1 /5)-Z6-A015-IRR | 2027-04-10 → 2027-04-06 (-4d) | 2027-04-12 → 2027-04-07 (-5d) |  | -112.02d → -109d |
| 4795 | **RHD4-02-002-A015-(IRR)-Wash out Valves** | 2027-04-10 → 2027-04-06 (-4d) | 2027-04-14 → 2027-04-10 (-4d) |  |  |
| RHD4CZ6A015IRR3102 | Installation for Wash out Valve for Irrigation Network - (RD-A-1 /5)-Z6-A015-IRR | 2027-04-10 → 2027-04-06 (-4d) | 2027-04-12 → 2027-04-07 (-5d) |  | -112.02d → -109d |
| RHD4CZ6A015IRR3202 | Stem and Service box for Wash out Valve for Irrigation Network - (RD-A-1 /5)-Z6-A015-IRR | 2027-04-12 → 2027-04-08 (-4d) | 2027-04-14 → 2027-04-10 (-4d) |  | -112.02d → -109d |
| 4796 | **RHD4-02-002-A015-(IRR)-Air Valve Chamber** | 2027-04-03 → 2027-03-30 (-4d) | 2027-04-12 → 2027-04-07 (-5d) |  |  |
| RHD4CZ6A015IRR2102 | Excavation and Bedding for Valve Chamber for Irrigation Network - (RD-A-1 /5)-Z6-A015-IRR | 2027-04-03 → 2027-03-30 (-4d) | 2027-04-05 → 2027-03-31 (-5d) |  | -110.02d → -107d |
| RHD4CZ6A015IRR2202 | PC works for Valve Chamber for Irrigation Network - (RD-A-1 /5)-Z6-A015-IRR | 2027-04-05 → 2027-04-01 (-4d) | 2027-04-07 → 2027-04-03 (-4d) |  | -110.02d → -107d |
| RHD4CZ6A015IRR2302 | Installation for Valve Chamber for Irrigation Network - (RD-A-1 /5)-Z6-A015-IRR | 2027-04-07 → 2027-04-04 (-3d) | 2027-04-10 → 2027-04-05 (-5d) |  | -110.02d → -107d |
| RHD4CZ6A015IRR2402 | Backfilling works for Valve Chamber for Irrigation Network - (RD-A-1 /5)-Z6-A015-IRR | 2027-04-10 → 2027-04-06 (-4d) | 2027-04-12 → 2027-04-07 (-5d) |  | -110.02d → -107d |
| 4797 | **RHD4-02-002-A015-(IRR)-Air Valves** | 2027-04-10 → 2027-04-06 (-4d) | 2027-04-14 → 2027-04-10 (-4d) |  |  |
| RHD4CZ6A015IRR3103 | Installation for Air Valves for Irrigation Network - (RD-A-1 /5)-Z6-A015-IRR | 2027-04-10 → 2027-04-06 (-4d) | 2027-04-12 → 2027-04-07 (-5d) |  | -110.02d → -107d |
| RHD4CZ6A015IRR3203 | Stem and Service box for Air Valves for Irrigation Network - (RD-A-1 /5)-Z6-A015-IRR | 2027-04-12 → 2027-04-08 (-4d) | 2027-04-14 → 2027-04-10 (-4d) |  | -110.02d → -107d |
| 4823 | **RHD4-02-002-Z6-A015-Low Voltage Network - LV** | 2027-09-15 → 2027-09-13 (-2d) | 2027-10-09 → 2027-10-05 (-4d) |  |  |

| ID | Task | Start | Finish | Complete | Total float |
| --- | --- | --- | --- | --- | --- |
| 4826 | **RHD4-02-002-A015-(LV)-Low Voltage cables** | 2027-09-15 → 2027-09-13 (-2d) | 2027-10-09 → 2027-10-05 (-4d) |  |  |
| RHD4CZ6A015LV3100 | Excavation for Low Voltage Cables for Low Voltage Network - (RD-A-1 /5)-Z6-A015-LV | 2027-09-15 → 2027-09-13 (-2d) | 2027-09-22 → 2027-09-19 (-3d) |  | -192.02d → -190d |
| RHD4CZ6A015LV3200 | Cable Laying of Low Voltage Cables for Low Voltage Network - (RD-A-1 /5)-Z6-A015-LV | 2027-09-22 → 2027-09-20 (-2d) | 2027-09-29 → 2027-09-26 (-3d) |  | -192.02d → -190d |
| RHD4CZ6A015LV3300 | Warning tape and Backfill for Low Voltage Cables for Low Voltage Network - (RD-A-1 /5)-Z6-A015-LV | 2027-09-29 → 2027-09-27 (-2d) | 2027-10-05 → 2027-10-02 (-3d) |  | -192.02d → -190d |
| RHD4CZ6A015LV3400 | Testing of Low Voltage Cables for Low Voltage Network - (RD-A-1 /5)-Z6-A015-LV | 2027-10-05 → 2027-10-03 (-2d) | 2027-10-09 → 2027-10-05 (-4d) |  | -192.02d → -190d |
| 4829 | **RHD4-02-002-Z6-A015-Street Lighting Network - SL** | 2027-10-09 → 2027-10-06 (-3d) | 2027-11-06 → 2027-11-02 (-4d) |  |  |
| 4832 | **RHD4-02-002-A015-(SL)-Street Lighting cables** | 2027-10-09 → 2027-10-06 (-3d) | 2027-10-21 → 2027-10-18 (-3d) |  |  |
| RHD4CZ6A015SL3100 | Excavation for Street Lighting Cables for Street Lighting Network - (RD-A-1 /5)-Z6-A015-SL | 2027-10-09 → 2027-10-06 (-3d) | 2027-10-12 → 2027-10-09 (-3d) |  | -192.02d → -190d |
| RHD4CZ6A015SL3200 | Cable Laying of Street Lighting Cables for Street Lighting Network - (RD-A-1 /5)-Z6-A015-SL | 2027-10-12 → 2027-10-10 (-2d) | 2027-10-16 → 2027-10-12 (-4d) |  | -192.02d → -190d |
| RHD4CZ6A015SL3300 | Warning tape and Backfill for Street Lighting Cables for Street Lighting Network - (RD-A-1 /5)-Z6-A015-SL | 2027-10-16 → 2027-10-13 (-3d) | 2027-10-19 → 2027-10-16 (-3d) |  | -192.02d → -190d |
| RHD4CZ6A015SL3400 | Testing of Street Lighting Cables for Street Lighting Network - (RD-A-1 /5)-Z6-A015-SL | 2027-10-19 → 2027-10-17 (-2d) | 2027-10-21 → 2027-10-18 (-3d) |  | -192.02d → -190d |
| 4833 | **RHD4-02-002-A015-(SL)-Street Lighting Poles** | 2027-10-21 → 2027-10-19 (-2d) | 2027-11-06 → 2027-11-02 (-4d) |  |  |
| RHD4CZ6A015SL1100 | Excavation for RC Base for Lighting Poles for Street Lighting Network - (RD-A-1 /5)-Z6-A015-SL | 2027-10-21 → 2027-10-19 (-2d) | 2027-10-24 → 2027-10-20 (-4d) |  | -192.02d → -190d |
| RHD4CZ6A015SL1200 | Installation for RC Base for Lighting Poles for Street Lighting Network - (RD-A-1 /5)-Z6-A015-SL | 2027-10-24 → 2027-10-21 (-3d) | 2027-10-26 → 2027-10-23 (-3d) |  | -192.02d → -190d |
| RHD4CZ6A015SL1300 | Backfill for RC Base for Lighting Poles for Street Lighting Network - (RD-A-1 /5)-Z6-A015-SL | 2027-10-26 → 2027-10-24 (-2d) | 2027-10-28 → 2027-10-25 (-3d) |  | -192.02d → -190d |
| RHD4CZ6A015SL1400 | Installation for Lighting Poles for Street Lighting Network - (RD-A-1 /5)-Z6-A015-SL | 2027-10-28 → 2027-10-26 (-2d) | 2027-10-31 → 2027-10-27 (-4d) |  | -192.02d → -190d |
| RHD4CZ6A015SL1500 | Luminaire Installation for Lighting Poles for Street Lighting Network - (RD-A-1 /5)-Z6-A015-SL | 2027-11-02 → 2027-10-31 (-2d) | 2027-11-06 → 2027-11-02 (-4d) |  | -192.02d → -190d |
| 4835 | **RHD4-02-002-A015-(SL)-Street Lighting Earthing System** | 2027-10-31 → 2027-10-28 (-3d) | 2027-11-02 → 2027-10-30 (-3d) |  |  |
| RHD4CZ6A015SL6100 | Installation of Earthing for Lighting Poles and Fedder Pillers for Street Lighting Network - (RD-A-1 /5)-Z6-A015-SL | 2027-10-31 → 2027-10-28 (-3d) | 2027-11-02 → 2027-10-30 (-3d) |  | -192.02d → -190d |
| 4841 | **RHD4-02-002-Z6-A015-Telecommunications Network - TC** | 2026-12-27 → 2026-09-07 (-111d) | 2027-11-30 → 2027-11-27 (-3d) |  |  |
| 4842 | **RHD4-02-002-A015-(TC)-Telecommunications Ducts** | 2027-11-06 → 2027-11-03 (-3d) | 2027-11-30 → 2027-11-27 (-3d) |  |  |
| RHD4CZ6A015TC2100 | Excavation of HDPE Ducts for Telecom Network - (RD-A-1 /5)-Z6-A015-TC | 2027-11-06 → 2027-11-03 (-3d) | 2027-11-13 → 2027-11-09 (-4d) |  | -192.02d → -190d |
| RHD4CZ6A015TC2200 | Installation of HDPE Ducts for Telecom Network - (RD-A-1 /5)-Z6-A015-TC | 2027-11-13 → 2027-11-10 (-3d) | 2027-11-23 → 2027-11-20 (-3d) |  | -192.02d → -190d |
| RHD4CZ6A015TC2400 | Backfilling of HDPE Ducts for Telecom Network - (RD-A-1 /5)-Z6-A015-TC | 2027-11-23 → 2027-11-21 (-2d) | 2027-11-30 → 2027-11-27 (-3d) |  | -192.02d → -190d |
| 4843 | **RHD4-02-002-A015-(TC)-Telecommunications Manholes** | 2027-11-13 → 2027-11-10 (-3d) | 2027-11-20 → 2027-11-16 (-4d) |  |  |
| RHD4CZ6A015TC5100 | Excavation for Manholes for Telecom Network - (RD-A-1 /5)-Z6-A015-TC | 2027-11-13 → 2027-11-10 (-3d) | 2027-11-16 → 2027-11-13 (-3d) |  | -189.02d → -187d |
| RHD4CZ6A015TC5200 | Installation of Manholes for Telecom Network - (RD-A-1 /5)-Z6-A015-TC | 2027-11-16 → 2027-11-14 (-2d) | 2027-11-20 → 2027-11-16 (-4d) |  | -189.02d → -187d |
| 5411 | **RHD4-02-002-A015-(TC)-Telecomminications Road Crossings** | 2026-12-27 → 2026-09-07 (-111d) | 2027-01-05 → 2026-09-19 (-108d) |  |  |
| RHD4CZ6A015TC3100 | Excavation for Road Crossings for Telecom Network - (RD-A-1 /5)-Z6-A015-TC | 2026-12-27 → 2026-09-07 A (-111d) | 2026-12-28 → 2026-09-08 A (-111d) | 0% → 100% | -194.02d → none |
| RHD4CZ6A015TC3200 | Installation of Road Crossings for Telecom Network - (RD-A-1 /5)-Z6-A015-TC | 2026-12-29 → 2026-09-09 A (-111d) | 2026-12-31 → 2026-09-12 A (-110d) | 0% → 100% | -194.02d → none |
| RHD4CZ6A015TC3400 | Backfilling of Road Crossings for Telecom Network - (RD-A-1 /5)-Z6-A015-TC | 2027-01-03 → 2026-09-13 A (-112d) | 2027-01-05 → 2026-09-15 A (-112d) | 0% → 100% | -194.02d → none |
| RHD4CZ6A015TC3300 | Pouring of Road Crossings for Telecom Network - (RD-A-1 /5)-Z6-A015-TC | 2026-12-31 → 2026-09-16 A (-106d) | 2027-01-03 → 2026-09-19 A (-106d) | 0% → 100% | -194.02d → none |
| 4845 | **RHD4-02-002-Z6-A015-Information and Communication Technologies - ICT** |  | 2027-12-25 → 2027-12-21 (-4d) |  |  |
| 4846 | **RHD4-02-002-A015-(ICT)-Information and Communication Technologies Ducts** | 2027-11-30 → 2027-11-28 (-2d) | 2027-12-25 → 2027-12-21 (-4d) |  |  |
| RHD4CZ6A015ICT2100 | Excavation of HDPE Ducts for ICT Network - (RD-A-1 /5)-Z6-A015-ICT | 2027-11-30 → 2027-11-28 (-2d) | 2027-12-07 → 2027-12-04 (-3d) |  | -192.02d → -190d |
| RHD4CZ6A015ICT2200 | Installation of HDPE Ducts for ICT Network - (RD-A-1 /5)-Z6-A015-ICT | 2027-12-07 → 2027-12-05 (-2d) | 2027-12-18 → 2027-12-14 (-4d) |  | -192.02d → -190d |
| RHD4CZ6A015ICT2400 | Backfilling of HDPE Ducts for ICT Network - (RD-A-1 /5)-Z6-A015-ICT | 2027-12-18 → 2027-12-15 (-3d) | 2027-12-25 → 2027-12-21 (-4d) |  | -192.02d → -190d |
| 4847 | **RHD4-02-002-A015-(ICT)-Information and Communication Technologies Manholes** | 2027-12-07 → 2027-12-05 (-2d) | 2027-12-14 → 2027-12-11 (-3d) |  |  |
| RHD4CZ6A015ICT5100 | Excavation for Manholes for ICT Network - (RD-A-1 /5)-Z6-A015-ICT | 2027-12-07 → 2027-12-05 (-2d) | 2027-12-11 → 2027-12-07 (-4d) |  | -189.02d → -187d |
| RHD4CZ6A015ICT5200 | Installation of Manholes for ICT Network - (RD-A-1 /5)-Z6-A015-ICT | 2027-12-11 → 2027-12-08 (-3d) | 2027-12-14 → 2027-12-11 (-3d) |  | -189.02d → -187d |
| 4849 | **RHD4-02-002-Z6-A015-Security Network - CCTV** | 2027-12-25 → 2027-12-22 (-3d) | 2028-01-08 → 2028-01-04 (-4d) |  |  |
| 4851 | **RHD4-02-002-A015-(CCTV)-CCTV Poles** | 2027-12-25 → 2027-12-22 (-3d) | 2028-01-03 → 2027-12-30 (-4d) |  |  |
| RHD4CZ6A015CCTV1100 | Excavation for RC Base for CCTV Poles for Security Network - (RD-A-1 /5)-Z6-A015-CCTV | 2027-12-25 → 2027-12-22 (-3d) | 2027-12-27 → 2027-12-23 (-4d) |  | -192.02d → -190d |
| RHD4CZ6A015CCTV1200 | Installation for RC Base for CCTV Poles for Security Network - (RD-A-1 /5)-Z6-A015-CCTV | 2027-12-27 → 2027-12-25 (-2d) | 2027-12-29 → 2027-12-26 (-3d) |  | -192.02d → -190d |
| RHD4CZ6A015CCTV1300 | Backfill for RC Base for CCTV Poles for Security Network - (RD-A-1 /5)-Z6-A015-CCTV | 2027-12-29 → 2027-12-27 (-2d) | 2028-01-01 → 2027-12-28 (-4d) |  | -192.02d → -190d |
| RHD4CZ6A015CCTV1400 | Installation for CCTV Poles for Security Network - (RD-A-1 /5)-Z6-A015-CCTV | 2028-01-01 → 2027-12-29 (-3d) | 2028-01-03 → 2027-12-30 (-4d) |  | -192.02d → -190d |
| 4852 | **RHD4-02-002-A015-(CCTV)-Camera** | 2028-01-03 → 2028-01-01 (-2d) | 2028-01-05 → 2028-01-02 (-3d) |  |  |
| RHD4CZ6A015CCTV3100 | Installation for Cameras for Security Network - (RD-A-1 /5)-Z6-A015-CCTV | 2028-01-03 → 2028-01-01 (-2d) | 2028-01-05 → 2028-01-02 (-3d) |  | -192.02d → -190d |
| 4855 | **RHD4-02-002-A015-(CCTV)-CCTV Panels and Components** | 2028-01-05 → 2028-01-03 (-2d) | 2028-01-08 → 2028-01-04 (-4d) |  |  |
| RHD4CZ6A015CCTV6100 | Installation for CCTV Panels for Security Network - (RD-A-1 /5)-Z6-A015-CCTV | 2028-01-05 → 2028-01-03 (-2d) | 2028-01-08 → 2028-01-04 (-4d) |  | -192.02d → -190d |
| 4866 | **RHD4-02-002-Z6-C052** |  | 2027-09-08 → 2027-09-09 (+1d) |  |  |
| 5045 | **RHD4-02-002-Z6-C052-Road Works - RD** |  | 2027-09-08 → 2027-09-09 (+1d) |  |  |
| 5047 | **RHD4-02-002-C052-(RD)-Aggregate Base Course** | 2027-02-24 → 2026-11-10 (-106d) | 2027-02-27 → 2026-11-12 (-107d) |  |  |
| RHD4CZ6C052RD2100 | Supply, lay and compaction Aggregate base course compacted thickness 300 mmfor Roads - (RD-C-5 /2)-Z6-C052-RD | 2027-02-24 → 2026-11-10 A (-106d) | 2027-02-27 → 2026-11-12 A (-107d) | 0% → 100% | -170d → none |
| 5048 | **RHD4-02-002-C052-(RD)-Bituminous base course Two Layers, including (MC1)&(RC2)** | 2027-02-28 → 2026-11-10 (-110d) | 2027-06-27 → 2027-06-28 (+1d) |  |  |
| RHD4CZ6C052RD3100 | Supply, lay and Asphaltic base course including Prime Coat (MC1) for 1st Layer - (RD-C-5 /2)-Z6-C052-RD | 2027-02-28 → 2026-11-10 A (-110d) | 2027-03-01 → 2027-02-14 (-15d) | 0% → 50% | -170d → -158d |
| RHD4CZ6C052RD3200 | Supply, lay and Asphaltic base course including Tack Coat (RC2) for 2nd Layer - (RD-C-5 /2)-Z6-C052-RD | 2027-06-26 → 2027-06-27 (+1d) | 2027-06-27 → 2027-06-28 (+1d) |  | -95d → -96d |
| 5050 | **RHD4-02-002-C052-(RD)-Precast Concrete Curb** | 2027-08-17 → 2027-08-18 (+1d) | 2027-08-19 → 2027-08-21 (+2d) |  |  |
| RHD4CZ6C052RD5100 | Supply and installation Precast Concrete Kerb for Roads - (RD-C-5 /2)-Z6-C052-RD | 2027-08-17 → 2027-08-18 (+1d) | 2027-08-19 → 2027-08-21 (+2d) |  | -138d → -139d |
| 5053 | **RHD4-02-002-C052-(RD)-Traffic Signage** | 2027-08-29 → 2027-08-30 (+1d) | 2027-09-04 → 2027-09-05 (+1d) |  |  |
| RHD4CZ6C052RD8100 | Installation of Traffic Signage for Road Network - (RD-C-5 /2)-Z6-C052-RD | 2027-08-29 → 2027-08-30 (+1d) | 2027-09-04 → 2027-09-05 (+1d) |  | -145d → -146d |
| 5049 | **RHD4-02-002-C052-(RD)-Bituminous concrete wearing course including tack coat (RC2)** | 2027-08-21 → 2027-08-22 (+1d) | 2027-08-22 → 2027-08-23 (+1d) |  |  |
| RHD4CZ6C052RD4100 | Supply, lay and compaction Asphaltic wearing course including tack Coat (RC2)for Road Network - (RD-C-5 /2)-Z6-C052-RD | 2027-08-21 → 2027-08-22 (+1d) | 2027-08-22 → 2027-08-23 (+1d) |  | -134d → -135d |
| 5052 | **RHD4-02-002-C052-(RD)-Pavement Marking** | 2027-09-05 → 2027-09-06 (+1d) | 2027-09-08 → 2027-09-09 (+1d) |  |  |
| RHD4CZ6C052RD7100 | Pavement Markings for Road Network - (RD-C-5 /2)-Z6-C052-RD | 2027-09-05 → 2027-09-06 (+1d) | 2027-09-08 → 2027-09-09 (+1d) |  | -145d → -146d |
| 4870 | **RHD4-02-002-Z6-C052-Storm Network - ST** |  | 2027-03-04 → 2027-03-06 (+2d) |  |  |
| 3739 | **RHD4-02-002-C052-(ST)-GRP Pipes - 700 mm diameter** |  | 2027-01-27 → 2027-01-28 (+1d) |  |  |
| RHD4CZ6C052ST1403 | Primary Test for GRP Pipe Line 700 mm - (RD-C-5 /2)-Z6-C052-ST | 2027-01-26 → 2027-01-27 (+1d) | 2027-01-27 → 2027-01-28 (+1d) |  | -149d → -150d |
| 4888 | **RHD4-02-002-C052-(ST)-MH Works - 1500 mm diameter** |  | 2027-02-28 → 2027-03-01 (+1d) |  |  |
| RHD4CZ6C052ST3301 | MH Ring and C.Slab works and Backfilling works for MH 1500 mm - (RD-C-5 /2)-Z6-C052-ST |  | 2027-01-27 → 2027-01-28 (+1d) |  | -171d → -172d |

| ID | Task | Start | Finish | Complete | Total float |
| --- | --- | --- | --- | --- | --- |
| RHD4CZ6C052ST3401 | Steel Cover for MH 1500 mm - (RD-C-5 /2)-Z6-C052-ST | 2027-02-21 → 2027-02-23 (+2d) | 2027-02-23 → 2027-02-24 (+1d) |  | -163d → -164d |
| RHD4CZ6C052ST3501 | Finishing, Benching, Testing works for MH 1500 mm - (RD-C-5 /2)-Z6-C052-ST | 2027-02-27 → 2027-02-28 (+1d) | 2027-02-28 → 2027-03-01 (+1d) |  | -161d → -162d |
| 4887 | **RHD4-02-002-C052-(ST)-MH Works - 1200 mm diameter** |  | 2027-03-04 → 2027-03-06 (+2d) |  |  |
| RHD4CZ6C052ST3300 | MH Ring and C.Slab works and Backfilling works for MH 1200 mm - (RD-C-5 /2)-Z6-C052-ST |  | 2027-01-28 → 2027-01-30 (+2d) |  | -172d → -173d |
| RHD4CZ6C052ST3400 | Steel Cover for MH 1200 mm - (RD-C-5 /2)-Z6-C052-ST | 2027-02-27 → 2027-02-28 (+1d) | 2027-03-01 → 2027-03-02 (+1d) |  | -165d → -166d |
| RHD4CZ6C052ST3500 | Finishing, Benching, Testing works for MH 1200 mm - (RD-C-5 /2)-Z6-C052-ST | 2027-03-02 → 2027-03-03 (+1d) | 2027-03-04 → 2027-03-06 (+2d) |  | -165d → -166d |
| 4873 | **RHD4-02-002-C052-(ST)-GRP Pipes - 600 mm diameter** |  | 2027-01-27 → 2027-01-28 (+1d) |  |  |
| RHD4CZ6C052ST1402 | Primary Test for GRP Pipe Line 600 mm - (RD-C-5 /2)-Z6-C052-ST | 2027-01-26 → 2027-01-27 (+1d) | 2027-01-27 → 2027-01-28 (+1d) |  | -148d → -146d |
| 4872 | **RHD4-02-002-C052-(ST)-GRP Pipes - 500 mm diameter** |  | 2027-01-27 → 2027-01-28 (+1d) |  |  |
| RHD4CZ6C052ST1401 | Primary Test for GRP Pipe Line 500 mm - (RD-C-5 /2)-Z6-C052-ST |  | 2027-01-27 → 2027-01-28 (+1d) |  | -143d → -144d |
| 4886 | **RHD4-02-002-C052-(ST)-UPVC Pipes - 400 mm diameter** | 2026-09-03 → 2026-09-15 (+12d) | 2027-02-15 → 2027-02-16 (+1d) |  |  |
| RHD4CZ6C052ST2501 | Backfilling and warning tape works for UPVC Pipe Line 400 mm - (RD-C-5 /2)-Z6-C052-ST | 2026-09-03 A → 2026-10-21 A (+48d) |  |  |  |
| RHD4CZ6C052ST2401 | Primary Test for UPVC Pipe Line 400 mm - (RD-C-5 /2)-Z6-C052-ST | 2027-02-14 → 2027-02-15 (+1d) | 2027-02-15 → 2027-02-16 (+1d) |  | -159d → -160d |
| 4885 | **RHD4-02-002-C052-(ST)-UPVC Pipes - 300 mm diameter** |  | 2027-02-25 → 2027-02-27 (+2d) |  |  |
| RHD4CZ6C052ST2100 | Excavation works for UPVC Pipe Line 300 mm - (RD-C-5 /2)-Z6-C052-ST |  | 2027-02-15 → 2027-02-16 (+1d) |  | -165d → -166d |
| RHD4CZ6C052ST2200 | Bedding works for UPVC Pipe Line 300 mm - (RD-C-5 /2)-Z6-C052-ST |  | 2027-02-17 → 2027-02-18 (+1d) |  | -165d → -166d |
| RHD4CZ6C052ST2300 | Installing for UPVC Pipe Line 300 mm - (RD-C-5 /2)-Z6-C052-ST |  | 2027-02-20 → 2027-02-21 (+1d) |  | -165d → -166d |
| RHD4CZ6C052ST2500 | Backfilling and warning tape works for UPVC Pipe Line 300 mm - (RD-C-5 /2)-Z6-C052-ST |  | 2027-02-25 → 2027-02-27 (+2d) |  | -165d → -166d |
| RHD4CZ6C052ST2400 | Primary Test for UPVC Pipe Line 300 mm - (RD-C-5 /2)-Z6-C052-ST | 2027-02-21 → 2027-02-23 (+2d) | 2027-02-23 → 2027-02-24 (+1d) |  | -165d → -166d |
| 4893 | **RHD4-02-002-C052-(ST)-Concrete Encasement** |  | 2027-02-20 → 2027-02-21 (+1d) |  |  |
| RHD4CZ6C052ST6100 | Pipe Encasement for Storm Pipelines - (RD-C-5 /2)-Z6-C052-ST |  | 2027-02-20 → 2027-02-21 (+1d) |  | -163d → -164d |
| 4894 | **RHD4-02-002-Z6-C052-Catch Basin - ST** |  | 2027-02-28 → 2027-03-01 (+1d) |  |  |
| 4895 | **RHD4-02-002-C052-(ST)-Single Catch Basin Works** |  | 2027-02-28 → 2027-03-01 (+1d) |  |  |
| RHD4CZ6C052ST7100 | Excavation works for Single Catch Basin - (RD-C-5 /2)-Z6-C052-ST |  | 2027-02-02 → 2027-02-03 (+1d) |  | -172d → -173d |
| RHD4CZ6C052ST7200 | PC Blinding, Installation and Pipe connection for Single Catch Basin - (RD-C-5 /2)-Z6-C052-ST |  | 2027-02-07 → 2027-02-08 (+1d) |  | -172d → -173d |
| RHD4CZ6C052ST7300 | Rings & C.Slab & Final Backfill for Single Catch Basin - (RD-C-5 /2)-Z6-C052-ST |  | 2027-02-13 → 2027-02-14 (+1d) |  | -172d → -173d |
| RHD4CZ6C052ST7400 | Steel Cover for Single Catch Basin - (RD-C-5 /2)-Z6-C052-ST | 2027-02-14 → 2027-02-15 (+1d) | 2027-02-17 → 2027-02-18 (+1d) |  | -172d → -173d |
| RHD4CZ6C052ST7500 | Finishing and Insulation works for Single Catch Basin - (RD-C-5 /2)-Z6-C052-ST | 2027-02-18 → 2027-02-20 (+2d) | 2027-02-28 → 2027-03-01 (+1d) |  | -165d → -166d |
| 4896 | **RHD4-02-002-C052-(ST)-Double Catch Basin Works** |  | 2027-02-23 → 2027-02-24 (+1d) |  |  |
| RHD4CZ6C052ST8300 | Rings & C.Slab & Final Backfillfor Double Catch Basin - (RD-C-5 /2)-Z6-C052-ST | 2027-02-03 → 2027-02-04 (+1d) | 2027-02-04 → 2027-02-06 (+2d) |  | -161d → -162d |
| RHD4CZ6C052ST8400 | Steel Cover for Double Catch Basin - (RD-C-5 /2)-Z6-C052-ST | 2027-02-18 → 2027-02-20 (+2d) | 2027-02-20 → 2027-02-21 (+1d) |  | -172d → -173d |
| RHD4CZ6C052ST8500 | Finishing and Insulation works for Double Catch Basin - (RD-C-5 /2)-Z6-C052-ST | 2027-02-21 → 2027-02-23 (+2d) | 2027-02-23 → 2027-02-24 (+1d) |  | -172d → -173d |
| 4299 | **RHD4-02-002-Z6-C052-Concrete Box Culvert - ST** |  | 2027-03-17 → 2027-03-03 (-14d) |  |  |
| 4300 | **RHD4-02-002-C052-(ST)-Concrete Box Culvert** |  | 2027-03-17 → 2027-03-03 (-14d) |  |  |
| RHD4CZ6C052ST4600 | Insulation and Testing for Box Culvert - (RD-C-5/2)-Z6-C052-ST |  | 2027-03-17 → 2027-03-03 (-14d) |  | -115d → -106d |
| 4301 | **RHD4-02-002-C052-(ST)-Concrete Chambers** | 2026-08-20 → 2027-02-13 (+177d) | 2027-03-13 → 2027-02-27 (-14d) |  |  |
| RHD4CZ6C052ST5100 | Excavation and Bedding for Concrete Chambers - for Box Culvert - (RD-C-5/2)-Z6-C052-ST | 2026-08-20 A → 2027-02-13 (+177d) | 2027-02-27 → 2027-02-15 (-12d) | 50% → 0% | -115d → -106d |
| RHD4CZ6C052ST5200 | PC works for Concrete Chambers - for Box Culvert - (RD-C-5/2)-Z6-C052-ST | 2026-08-25 A → 2027-02-16 (+175d) | 2027-03-02 → 2027-02-18 (-12d) | 50% → 0% | -115d → -106d |
| RHD4CZ6C052ST5300 | Installation for Concrete Chambers - for Box Culvert - (RD-C-5/2)-Z6-C052-ST | 2026-08-30 A → 2027-02-20 (+174d) | 2027-03-06 → 2027-02-23 (-11d) | 50% → 0% | -115d → -106d |
| RHD4CZ6C052ST5400 | Backfilling works for Concrete Chambers - for Box Culvert - (RD-C-5/2)-Z6-C052-ST | 2027-03-07 → 2027-02-24 (-11d) | 2027-03-13 → 2027-02-27 (-14d) |  | -115d → -106d |
| 4919 | **RHD4-02-002-Z6-C052-Sewage Network - SW** |  | 2027-03-03 → 2027-03-04 (+1d) |  |  |
| 4929 | **RHD4-02-002-C052-(SW)-MH Works - 1200 mm diameter** |  | 2027-03-03 → 2027-03-04 (+1d) |  |  |
| RHD4CZ6C052SW3300 | MH Ring and C.Slab works and Backfilling works for MH 1200 mm - (RD-C-5 /2)-Z6-C052-SW | 2027-02-16 → 2027-02-17 (+1d) | 2027-02-21 → 2027-02-23 (+2d) |  | -165d → -166d |
| RHD4CZ6C052SW3400 | Steel Cover for MH 1200 mm - (RD-C-5 /2)-Z6-C052-SW | 2027-02-23 → 2027-02-24 (+1d) | 2027-02-25 → 2027-02-27 (+2d) |  | -161d → -162d |
| RHD4CZ6C052SW3500 | Finishing, Benching, Testing works for MH 1200 mm - (RD-C-5 /2)-Z6-C052-SW | 2027-02-27 → 2027-02-28 (+1d) | 2027-03-03 → 2027-03-04 (+1d) |  | -161d → -162d |
| 4925 | **RHD4-02-002-C052-(SW)-UPVC Pipes - 200 mm diameter** |  | 2027-02-28 → 2027-03-01 (+1d) |  |  |
| RHD4CZ6C052SW2500 | Backfilling and warning tape works for UPVC Pipe Line 200 mm - (RD-C-5 /2)-Z6-C052-SW |  | 2027-02-28 → 2027-03-01 (+1d) |  | -165d → -166d |
| RHD4CZ6C052SW2400 | Primary Test for UPVC Pipe Line 200 mm - (RD-C-5 /2)-Z6-C052-SW |  | 2027-02-24 → 2027-02-25 (+1d) |  | -165d → -166d |
| 4956 | **RHD4-02-002-Z6-C052-Potable Network - PT** |  | 2027-04-01 → 2027-04-03 (+2d) |  |  |
| 4957 | **RHD4-02-002-C052-(PT)-HDPE Pipes - 110 mm diameter** |  | 2027-03-21 → 2027-03-22 (+1d) |  |  |
| RHD4CZ6C052PT1100 | Excavation works for HDPE Pipline 110 mm - (RD-C-5 /2)-Z6-C052-PT |  | 2027-03-04 → 2027-03-06 (+2d) |  | -165d → -166d |
| RHD4CZ6C052PT1200 | Bedding works for HDPE Pipline 110 mm - (RD-C-5 /2)-Z6-C052-PT |  | 2027-03-07 → 2027-03-08 (+1d) |  | -159d → -160d |
| RHD4CZ6C052PT1300 | Installing for HDPE Pipline 110 mm - (RD-C-5 /2)-Z6-C052-PT |  | 2027-03-14 → 2027-03-15 (+1d) |  | -160d → -161d |
| RHD4CZ6C052PT1400 | Primary Test for HDPE Pipline 110 mm - (RD-C-5 /2)-Z6-C052-PT | 2027-03-17 → 2027-03-18 (+1d) | 2027-03-18 → 2027-03-20 (+2d) |  | -160d → -161d |
| RHD4CZ6C052PT1500 | Backfilling and warning tape works for HDPE Pipline 110 mm - (RD-C-5 /2)-Z6-C052-PT | 2027-03-20 → 2027-03-21 (+1d) | 2027-03-21 → 2027-03-22 (+1d) |  | -160d → -161d |
| 3643 | **RHD4-02-002-C052-(PT)-Air Valve Chambers** | 2027-03-06 → 2027-03-07 (+1d) | 2027-03-20 → 2027-03-18 (-2d) |  |  |
| RHD4CZ6C052PT2102 | Excavation and Bedding for Air Valve Chambers for Potable Water Network - (RD-C-5 /2)-Z6-C052-PT | 2027-03-06 → 2027-03-07 (+1d) | 2027-03-07 → 2027-03-08 (+1d) |  | -165d → -166d |
| RHD4CZ6C052PT2202 | PC works for Air Valve Chambers for Potable Water Network - (RD-C-5 /2)-Z6-C052-PT | 2027-03-14 → 2027-03-13 (-1d) | 2027-03-15 → 2027-03-14 (-1d) |  | -167d → -166d |
| RHD4CZ6C052PT2302 | Installation for Air Valve Chambers for Potable Water Network - (RD-C-5 /2)-Z6-C052-PT | 2027-03-16 → 2027-03-15 (-1d) | 2027-03-17 → 2027-03-16 (-1d) |  | -167d → -166d |
| RHD4CZ6C052PT2402 | Backfilling works for Air Valve Chambers for Potable Water Network - (RD-C-5 /2)-Z6-C052-PT | 2027-03-18 → 2027-03-17 (-1d) | 2027-03-20 → 2027-03-18 (-2d) |  | -167d → -166d |
| 3644 | **RHD4-02-002-C052-(PT)-Air Valves** | 2027-03-18 → 2027-03-17 (-1d) | 2027-03-22 → 2027-03-21 (-1d) |  |  |
| RHD4CZ6C052PT3103 | Installation for Air Valves for Potable Water Network - (RD-C-5 /2)-Z6-C052-PT | 2027-03-18 → 2027-03-17 (-1d) | 2027-03-20 → 2027-03-18 (-2d) |  | -167d → -166d |
| RHD4CZ6C052PT3203 | Stem and Service box for Air Valves for Potable Water Network - (RD-C-5 /2)-Z6-C052-PT | 2027-03-21 → 2027-03-20 (-1d) | 2027-03-22 → 2027-03-21 (-1d) |  | -167d → -166d |
| 4962 | **RHD4-02-002-C052-(PT)-Gate Valves (Direct Buried)** | 2027-03-13 → 2027-03-14 (+1d) | 2027-03-23 → 2027-03-24 (+1d) |  |  |
| RHD4CZ6C052PT3100 | Installation for Direct Buried Gate Valves - (RD-C-5 /2)-Z6-C052-PT | 2027-03-13 → 2027-03-14 (+1d) | 2027-03-14 → 2027-03-15 (+1d) |  | -160d → -161d |
| RHD4CZ6C052PT3200 | Stem and Service box for Direct Buried Gate Valves - (RD-C-5 /2)-Z6-C052-PT | 2027-03-22 → 2027-03-23 (+1d) | 2027-03-23 → 2027-03-24 (+1d) |  | -158d → -159d |
| 4965 | **RHD4-02-002-C052-(PT)-Wash out Valve Chambers** | 2027-03-06 → 2027-03-07 (+1d) | 2027-03-17 → 2027-03-18 (+1d) |  |  |
| RHD4CZ6C052PT2101 | Excavation and Bedding for Wash out Valve Chambers for Potable Water Network - (RD-C-5 /2)-Z6-C052-PT | 2027-03-06 → 2027-03-07 (+1d) | 2027-03-07 → 2027-03-08 (+1d) |  | -165d → -166d |
| RHD4CZ6C052PT2201 | PC works for Wash out Valve Chambers for Potable Water Network - (RD-C-5 /2)-Z6-C052-PT | 2027-03-08 → 2027-03-13 (+5d) | 2027-03-13 → 2027-03-14 (+1d) |  | -165d → -166d |
| RHD4CZ6C052PT2301 | Installation for Wash out Valve Chambers for Potable Water Network - (RD-C-5 /2)-Z6-C052-PT | 2027-03-14 → 2027-03-15 (+1d) | 2027-03-15 → 2027-03-16 (+1d) |  | -165d → -166d |

| ID | Task | Start | Finish | Total float |
| --- | --- | --- | --- | --- |
| RHD4CZ6C052PT2401 | Backfilling works for Wash out Valve Chambers for Potable Water Network - (RD-C-5 /2)-Z6-C052-PT | 2027-03-16 → 2027-03-17 (+1d) | 2027-03-17 → 2027-03-18 (+1d) | -165d → -166d |
| 4966 | **RHD4-02-002-C052-(PT)-Wash out Valves** | 2027-03-16 → 2027-03-17 (+1d) | 2027-03-20 → 2027-03-21 (+1d) |  |
| RHD4CZ6C052PT3102 | Installation for Wash out Valves for Potable Water Network - (RD-C-5 /2)-Z6-C052-PT | 2027-03-16 → 2027-03-17 (+1d) | 2027-03-17 → 2027-03-18 (+1d) | -165d → -166d |
| RHD4CZ6C052PT3202 | Stem and Service box for Wash out Valves for Potable Water Network - (RD-C-5 /2)-Z6-C052-PT | 2027-03-18 → 2027-03-20 (+2d) | 2027-03-20 → 2027-03-21 (+1d) | -165d → -166d |
| 4969 | **RHD4-02-002-C052-(PT)-Fire Hydrant** | 2027-03-22 → 2027-03-23 (+1d) | 2027-04-01 → 2027-04-03 (+2d) |  |
| RHD4CZ6C052PT4100 | Excavation and Bedding and Pipe Installation for Fire Hydrant - (RD-C-5 /2)-Z6-C052-PT | 2027-03-22 → 2027-03-23 (+1d) | 2027-03-23 → 2027-03-24 (+1d) | -160d → -161d |
| RHD4CZ6C052PT4200 | Valve Installation for Fire Hydrant - (RD-C-5 /2)-Z6-C052-PT | 2027-03-24 → 2027-03-25 (+1d) | 2027-03-25 → 2027-03-27 (+2d) | -97d → -98d |
| RHD4CZ6C052PT4300 | Stem for Fire Hydrant - (RD-C-5 /2)-Z6-C052-PT | 2027-03-27 → 2027-03-28 (+1d) | 2027-03-28 → 2027-03-29 (+1d) | -97d → -98d |
| RHD4CZ6C052PT4400 | Fire Installation for Fire Hydrant - (RD-C-5 /2)-Z6-C052-PT | 2027-03-29 → 2027-03-30 (+1d) | 2027-03-30 → 2027-03-31 (+1d) | -97d → -98d |
| RHD4CZ6C052PT4500 | Protection Barriers for Fire Hydrant - (RD-C-5 /2)-Z6-C052-PT | 2027-03-31 → 2027-04-01 (+1d) | 2027-04-01 → 2027-04-03 (+2d) | -97d → -98d |
| 4970 | **RHD4-02-002-C052-(PT)-Concrete Encasement** | 2027-03-13 → 2027-03-14 (+1d) | 2027-03-14 → 2027-03-15 (+1d) |  |
| RHD4CZ6C052PT5100 | Pipe Encasement for Potable Pipelines - (RD-C-5 /2)-Z6-C052-PT | 2027-03-13 → 2027-03-14 (+1d) | 2027-03-14 → 2027-03-15 (+1d) | -160d → -161d |
| 4958 | **RHD4-02-002-C052-(PT)-HDPE Pipes - 160 mm diameter** |  | 2027-03-18 → 2027-03-20 (+2d) |  |
| RHD4CZ6C052PT1101 | Excavation works for HDPE Pipline 160 mm - (RD-C-5 /2)-Z6-C052-PT |  | 2027-03-02 → 2027-03-03 (+1d) | -165d → -166d |
| RHD4CZ6C052PT1201 | Bedding works for HDPE Pipline 160 mm - (RD-C-5 /2)-Z6-C052-PT |  | 2027-03-04 → 2027-03-06 (+2d) | -160d → -161d |
| RHD4CZ6C052PT1301 | Installing for HDPE Pipline 160 mm - (RD-C-5 /2)-Z6-C052-PT |  | 2027-03-08 → 2027-03-13 (+5d) | -160d → -161d |
| RHD4CZ6C052PT1401 | Primary Test for HDPE Pipline 160 mm - (RD-C-5 /2)-Z6-C052-PT | 2027-03-15 → 2027-03-16 (+1d) | 2027-03-16 → 2027-03-17 (+1d) | -160d → -161d |
| RHD4CZ6C052PT1501 | Backfilling and warning tape works for HDPE Pipline 160 mm - (RD-C-5 /2)-Z6-C052-PT | 2027-03-17 → 2027-03-18 (+1d) | 2027-03-18 → 2027-03-20 (+2d) | -160d → -161d |
| 4971 | **RHD4-02-002-Z6-C052-Irrigation Network - IRR** |  | 2027-04-13 → 2027-04-14 (+1d) |  |
| 4972 | **RHD4-02-002-C052-(IRR)-HDPE Pipes - 160 mm diameter** |  | 2027-04-11 → 2027-04-12 (+1d) |  |
| RHD4CZ6C052IRR1100 | Excavation works for HDPE Pipline 160 mm - (RD-C-5 /2)-Z6-C052-IRR |  | 2027-03-28 → 2027-03-29 (+1d) | -160d → -161d |
| RHD4CZ6C052IRR1200 | Bedding works for HDPE Pipline 160 mm - (RD-C-5 /2)-Z6-C052-IRR |  | 2027-03-31 → 2027-04-01 (+1d) | -155d → -156d |
| RHD4CZ6C052IRR1300 | Installing for HDPE Pipline 160 mm - (RD-C-5 /2)-Z6-C052-IRR |  | 2027-04-05 → 2027-04-06 (+1d) | -155d → -156d |
| RHD4CZ6C052IRR1400 | Primary Test for HDPE Pipline 160 mm - (RD-C-5 /2)-Z6-C052-IRR | 2027-04-06 → 2027-04-07 (+1d) | 2027-04-07 → 2027-04-08 (+1d) | -155d → -156d |
| RHD4CZ6C052IRR1500 | Backfilling and warning tape works for HDPE Pipline 160 mm - (RD-C-5 /2)-Z6-C052-IRR | 2027-04-08 → 2027-04-10 (+2d) | 2027-04-11 → 2027-04-12 (+1d) | -155d → -156d |
| 6685 | **RHD4-02-002-C052-(IRR)-Wash out Chamber** | 2027-03-24 → 2027-03-25 (+1d) | 2027-04-01 → 2027-04-03 (+2d) |  |
| RHD4CZ6C052IRR2101 | Excavation and Bedding for Wash out Chamber for Irrigation Network - (RD-C-5 /2)-Z6-C052-IRR | 2027-03-24 → 2027-03-25 (+1d) | 2027-03-25 → 2027-03-27 (+2d) | -160d → -161d |
| RHD4CZ6C052IRR2201 | PC works for Wash out Chamber for Irrigation Network - (RD-C-5 /2)-Z6-C052-IRR | 2027-03-27 → 2027-03-28 (+1d) | 2027-03-28 → 2027-03-29 (+1d) | -160d → -161d |
| RHD4CZ6C052IRR2301 | Installation for Wash out Chamber for Irrigation Network - (RD-C-5 /2)-Z6-C052-IRR | 2027-03-29 → 2027-03-30 (+1d) | 2027-03-30 → 2027-03-31 (+1d) | -160d → -161d |
| RHD4CZ6C052IRR2401 | Backfilling works for Wash out Chamber for Irrigation Network - (RD-C-5 /2)-Z6-C052-IRR | 2027-03-31 → 2027-04-01 (+1d) | 2027-04-01 → 2027-04-03 (+2d) | -160d → -161d |
| 6686 | **RHD4-02-002-C052-(IRR)-Wash out Valves** | 2027-03-31 → 2027-04-01 (+1d) | 2027-04-04 → 2027-04-05 (+1d) |  |
| RHD4CZ6C052IRR3102 | Installation for Wash out Valve for Irrigation Network - (RD-C-5 /2)-Z6-C052-IRR | 2027-03-31 → 2027-04-01 (+1d) | 2027-04-01 → 2027-04-03 (+2d) | -160d → -161d |
| RHD4CZ6C052IRR3202 | Stem and Service box for Wash out Valve for Irrigation Network - (RD-C-5 /2)-Z6-C052-IRR | 2027-04-03 → 2027-04-04 (+1d) | 2027-04-04 → 2027-04-05 (+1d) | -160d → -161d |
| 4980 | **RHD4-02-002-C052-(IRR)-Gate Valves (Direct Buried)** | 2027-04-01 → 2027-04-03 (+2d) | 2027-04-13 → 2027-04-14 (+1d) |  |
| RHD4CZ6C052IRR3100 | Installation for Direct Buried Gate Valves - (RD-C-5 /2)-Z6-C052-IRR | 2027-04-01 → 2027-04-03 (+2d) | 2027-04-03 → 2027-04-04 (+1d) | -148d → -149d |
| RHD4CZ6C052IRR3200 | Stem and Service box for Direct Buried Gate Valves - (RD-C-5 /2)-Z6-C052-IRR | 2027-04-12 → 2027-04-13 (+1d) | 2027-04-13 → 2027-04-14 (+1d) | -155d → -156d |
| 5005 | **RHD4-02-002-Z6-C052-Medium Voltage Network - MV** |  | 2027-06-21 → 2027-06-20 (-1d) |  |
| 5006 | **RHD4-02-002-C052-(MV)-Medium Voltage cable trench** | 2027-05-06 → 2027-05-05 (-1d) | 2027-05-22 → 2027-05-20 (-2d) |  |
| RHD4CZ6C052MV1100 | Excavation for Medium Voltage Trench - (RD-C-5 /2)-Z6-C052-MV | 2027-05-06 → 2027-05-05 (-1d) | 2027-05-11 → 2027-05-10 (-1d) | -172d → -171d |
| RHD4CZ6C052MV1200 | Trench Backfilling for Medium Voltage Network - (RD-C-5 /2)-Z6-C052-MV | 2027-05-12 → 2027-05-11 (-1d) | 2027-05-22 → 2027-05-20 (-2d) | -154d → -153d |
| 5007 | **RHD4-02-002-C052-(MV)-Medium Voltage duct banks** |  | 2027-02-25 → 2027-02-27 (+2d) |  |
| RHD4CZ6C052MV2100 | Excavation of Duct Banks for Medium Voltage Network - (RD-C-5 /2)-Z6-C052-MV |  | 2027-02-17 → 2027-02-18 (+1d) | -159d → -160d |
| RHD4CZ6C052MV2200 | Installation of Duct Banks for Medium Voltage Network - (RD-C-5 /2)-Z6-C052-MV |  | 2027-02-20 → 2027-02-21 (+1d) | -159d → -160d |
| RHD4CZ6C052MV2300 | Pouring of Duct Banks for Medium Voltage Network - (RD-C-5 /2)-Z6-C052-MV |  | 2027-02-23 → 2027-02-24 (+1d) | -159d → -160d |
| RHD4CZ6C052MV2400 | Backfilling of Duct Banks for Medium Voltage Network - (RD-C-5 /2)-Z6-C052-MV |  | 2027-02-25 → 2027-02-27 (+2d) | -159d → -160d |
| 5008 | **RHD4-02-002-C052-(MV)-Medium Voltage cables 3Cx 500 mm²** | 2027-05-12 → 2027-05-11 (-1d) | 2027-06-21 → 2027-06-20 (-1d) |  |
| RHD4CZ6C052MV3100 | Installation of Medium Voltage Cables 3Cx 500 mm² - (RD-C-5 /2)-Z6-C052-MV | 2027-05-12 → 2027-05-11 (-1d) | 2027-06-08 → 2027-06-07 (-1d) | -172d → -171d |
| RHD4CZ6C052MV3200 | Joints Installation of Medium Voltage Cables 3Cx 500 mm² - (RD-C-5 /2)-Z6-C052-MV | 2027-06-09 → 2027-06-08 (-1d) | 2027-06-12 → 2027-06-10 (-2d) | -172d → -171d |
| RHD4CZ6C052MV3300 | Testing of Medium Voltage Cables 3Cx 500 mm² - (RD-C-5 /2)-Z6-C052-MV | 2027-06-13 → 2027-06-12 (-1d) | 2027-06-19 → 2027-06-17 (-2d) | -172d → -171d |
| RHD4CZ6C052MV3400 | Termination of Medium Voltage Cables 3Cx 500 mm² - (RD-C-5 /2)-Z6-C052-MV | 2027-06-20 → 2027-06-19 (-1d) | 2027-06-21 → 2027-06-20 (-1d) | -172d → -171d |
| 5009 | **RHD4-02-002-C052-(MV)-Medium Voltage cables 3Cx 50 mm²** | 2027-06-20 → 2027-06-19 (-1d) | 2027-06-21 → 2027-06-20 (-1d) |  |
| RHD4CZ6C052MV3401 | Termination of Medium Voltage Cables 3Cx 50 mm² - (RD-C-5 /2)-Z6-C052-MV | 2027-06-20 → 2027-06-19 (-1d) | 2027-06-21 → 2027-06-20 (-1d) | -172d → -171d |
| 5010 | **RHD4-02-002-C052-(MV)-Normally open Point (Outdoor Type)** | 2027-06-07 → 2027-06-06 (-1d) | 2027-06-10 → 2027-06-09 (-1d) |  |
| RHD4CZ6C052MV4100 | Installation for Normally open Point - (RD-C-5 /2)-Z6-C052-MV | 2027-06-07 → 2027-06-06 (-1d) | 2027-06-08 → 2027-06-07 (-1d) | -171d → -170d |
| RHD4CZ6C052MV4200 | Termination for Normally open Point - (RD-C-5 /2)-Z6-C052-MV | 2027-06-09 → 2027-06-08 (-1d) | 2027-06-10 → 2027-06-09 (-1d) | -171d → -170d |
| 5012 | **RHD4-02-002-Z6-C052-Low Voltage Network - LV** |  | 2027-04-19 → 2027-04-20 (+1d) |  |
| 5014 | **RHD4-02-002-C052-(LV)-Low Voltage Drawpit** | 2027-04-05 → 2027-04-06 (+1d) | 2027-04-08 → 2027-04-10 (+2d) |  |
| RHD4CZ6C052LV5100 | Excavation of Drawpit size 900x900x1000mm for Low Voltage Network - (RD-C-5 /2)-Z6-C052-LV | 2027-04-05 → 2027-04-06 (+1d) | 2027-04-06 → 2027-04-07 (+1d) | -154d → -155d |
| RHD4CZ6C052LV5200 | Installation of Drawpit size 900x900x1000mm for Low Voltage Network - (RD-C-5 /2)-Z6-C052-LV | 2027-04-07 → 2027-04-08 (+1d) | 2027-04-08 → 2027-04-10 (+2d) | -154d → -155d |
| 5015 | **RHD4-02-002-C052-(LV)-Low Voltage cables** | 2027-04-10 → 2027-04-11 (+1d) | 2027-04-19 → 2027-04-20 (+1d) |  |
| RHD4CZ6C052LV3100 | Excavation for Low Voltage Cables for Low Voltage Network - (RD-C-5 /2)-Z6-C052-LV | 2027-04-10 → 2027-04-11 (+1d) | 2027-04-12 → 2027-04-13 (+1d) | -154d → -155d |
| RHD4CZ6C052LV3200 | Cable Laying of Low Voltage Cables for Low Voltage Network - (RD-C-5 /2)-Z6-C052-LV | 2027-04-13 → 2027-04-14 (+1d) | 2027-04-14 → 2027-04-15 (+1d) | -147d → -148d |
| RHD4CZ6C052LV3300 | Warning tape and Backfill for Low Voltage Cables for Low Voltage Network - (RD-C-5 /2)-Z6-C052-LV | 2027-04-15 → 2027-04-17 (+2d) | 2027-04-17 → 2027-04-18 (+1d) | -147d → -148d |
| RHD4CZ6C052LV3400 | Testing of Low Voltage Cables for Low Voltage Network - (RD-C-5 /2)-Z6-C052-LV | 2027-04-18 → 2027-04-19 (+1d) | 2027-04-19 → 2027-04-20 (+1d) | -147d → -148d |
| 5018 | **RHD4-02-002-Z6-C052-Street Lighting Network - SL** |  | 2027-05-03 → 2027-05-04 (+1d) |  |
| 5020 | **RHD4-02-002-C052-(SL)-Street Lighting Drawpit** | 2027-04-14 → 2027-04-15 (+1d) | 2027-04-18 → 2027-04-19 (+1d) |  |
| RHD4CZ6C052SL5100 | Excavation of Drawpit size 600x600x900mm for Street Lighting Network - (RD-C-5 /2)-Z6-C052-SL | 2027-04-14 → 2027-04-15 (+1d) | 2027-04-15 → 2027-04-17 (+2d) | -155d → -156d |
| RHD4CZ6C052SL5200 | Installation of Drawpit size 600x600x900mm for Street Lighting Network - (RD-C-5 /2)-Z6-C052-SL | 2027-04-17 → 2027-04-18 (+1d) | 2027-04-18 → 2027-04-19 (+1d) | -155d → -156d |
| 5021 | **RHD4-02-002-C052-(SL)-Street Lighting cables** | 2027-04-19 → 2027-04-20 (+1d) | 2027-04-28 → 2027-04-29 (+1d) |  |
| RHD4CZ6C052SL3100 | Excavation for Street Lighting Cables for Street Lighting Network - (RD-C-5 /2)-Z6-C052-SL | 2027-04-19 → 2027-04-20 (+1d) | 2027-04-21 → 2027-04-22 (+1d) | -155d → -156d |

| ID | Task | Start | Finish | Complete | Total float |
| --- | --- | --- | --- | --- | --- |
| RHD4CZ6C052SL3200 | Cable Laying of Street Lighting Cables for Street Lighting Network - (RD-C-5 /2)-Z6-C052-SL | 2027-04-22 → 2027-04-24 (+2d) | 2027-04-24 → 2027-04-25 (+1d) |  | -155d → -156d |
| RHD4CZ6C052SL3300 | Warning tape and Backfill for Street Lighting Cables for Street Lighting Network - (RD-C-5 /2)-Z6-C052-SL | 2027-04-25 → 2027-04-26 (+1d) | 2027-04-26 → 2027-04-27 (+1d) |  | -155d → -156d |
| RHD4CZ6C052SL3400 | Testing of Street Lighting Cables for Street Lighting Network - (RD-C-5 /2)-Z6-C052-SL | 2027-04-27 → 2027-04-28 (+1d) | 2027-04-28 → 2027-04-29 (+1d) |  | -155d → -156d |
| 5022 | **RHD4-02-002-C052-(SL)-Street Lighting Poles** | 2027-04-17 → 2027-04-18 (+1d) | 2027-05-03 → 2027-05-04 (+1d) |  |  |
| RHD4CZ6C052SL1100 | Excavation for RC Base for Lighting Poles for Street Lighting Network - (RD-C-5 /2)-Z6-C052-SL | 2027-04-17 → 2027-04-18 (+1d) | 2027-04-18 → 2027-04-19 (+1d) |  | -150d → -151d |
| RHD4CZ6C052SL1200 | Installation for RC Base for Lighting Poles for Street Lighting Network - (RD-C-5 /2)-Z6-C052-SL | 2027-04-19 → 2027-04-20 (+1d) | 2027-04-20 → 2027-04-21 (+1d) |  | -150d → -151d |
| RHD4CZ6C052SL1300 | Backfill for RC Base for Lighting Poles for Street Lighting Network - (RD-C-5 /2)-Z6-C052-SL | 2027-04-21 → 2027-04-22 (+1d) | 2027-04-22 → 2027-04-24 (+2d) |  | -150d → -151d |
| RHD4CZ6C052SL1400 | Installation for Lighting Poles for Street Lighting Network - (RD-C-5 /2)-Z6-C052-SL | 2027-04-29 → 2027-05-01 (+2d) | 2027-05-01 → 2027-05-02 (+1d) |  | -155d → -156d |
| RHD4CZ6C052SL1500 | Luminaire Installation for Lighting Poles for Street Lighting Network - (RD-C-5 /2)-Z6-C052-SL | 2027-05-02 → 2027-05-03 (+1d) | 2027-05-03 → 2027-05-04 (+1d) |  | -95d → -96d |
| 5024 | **RHD4-02-002-C052-(SL)-Street Lighting Earthing System** | 2027-05-02 → 2027-05-03 (+1d) | 2027-05-03 → 2027-05-04 (+1d) |  |  |
| RHD4CZ6C052SL6100 | Installation of Earthing for Lighting Poles and Fedder Pillers for Street Lighting Network - (RD-C-5 /2)-Z6-C052-SL | 2027-05-02 → 2027-05-03 (+1d) | 2027-05-03 → 2027-05-04 (+1d) |  | -155d → -156d |
| 5030 | **RHD4-02-002-Z6-C052-Telecommunications Network - TC** |  | 2027-05-31 → 2027-06-01 (+1d) |  |  |
| 5031 | **RHD4-02-002-C052-(TC)-Telecommunications Ducts** | 2027-05-04 → 2027-05-05 (+1d) | 2027-05-31 → 2027-06-01 (+1d) |  |  |
| RHD4CZ6C052TC2100 | Excavation of HDPE Ducts for Telecom Network - (RD-C-5 /2)-Z6-C052-TC | 2027-05-04 → 2027-05-05 (+1d) | 2027-05-10 → 2027-05-11 (+1d) |  | -95d → -96d |
| RHD4CZ6C052TC2200 | Installation of HDPE Ducts for Telecom Network - (RD-C-5 /2)-Z6-C052-TC | 2027-05-11 → 2027-05-12 (+1d) | 2027-05-24 → 2027-05-25 (+1d) |  | -95d → -96d |
| RHD4CZ6C052TC2400 | Backfilling of HDPE Ducts for Telecom Network - (RD-C-5 /2)-Z6-C052-TC | 2027-05-25 → 2027-05-26 (+1d) | 2027-05-31 → 2027-06-01 (+1d) |  | -95d → -96d |
| 5032 | **RHD4-02-002-C052-(TC)-Telecommunications Manholes** | 2027-05-11 → 2027-05-12 (+1d) | 2027-05-24 → 2027-05-25 (+1d) |  |  |
| RHD4CZ6C052TC5100 | Excavation for Manholes for Telecom Network - (RD-C-5 /2)-Z6-C052-TC | 2027-05-11 → 2027-05-12 (+1d) | 2027-05-19 → 2027-05-20 (+1d) |  | -95d → -96d |
| RHD4CZ6C052TC5200 | Installation of Manholes for Telecom Network - (RD-C-5 /2)-Z6-C052-TC | 2027-05-20 → 2027-05-22 (+2d) | 2027-05-24 → 2027-05-25 (+1d) |  | -95d → -96d |
| 5033 | **RHD4-02-002-C052-(TC)-Telecomminications Road Crossings** |  | 2027-02-01 → 2027-02-02 (+1d) |  |  |
| RHD4CZ6C052TC3100 | Excavation for Road Crossings for Telecom Network - (RD-C-5 /2)-Z6-C052-TC |  | 2027-01-26 → 2027-01-27 (+1d) |  | -157d → -155d |
| RHD4CZ6C052TC3200 | Installation of Road Crossings for Telecom Network - (RD-C-5 /2)-Z6-C052-TC |  | 2027-01-28 → 2027-01-30 (+2d) |  | -152d → -150d |
| RHD4CZ6C052TC3300 | Pouring of Road Crossings for Telecom Network - (RD-C-5 /2)-Z6-C052-TC |  | 2027-01-31 → 2027-02-01 (+1d) |  | -152d → -150d |
| RHD4CZ6C052TC3400 | Backfilling of Road Crossings for Telecom Network - (RD-C-5 /2)-Z6-C052-TC |  | 2027-02-01 → 2027-02-02 (+1d) |  | -152d → -150d |
| 5034 | **RHD4-02-002-Z6-C052-Information and Communication Technologies - ICT** |  | 2027-06-24 → 2027-06-26 (+2d) |  |  |
| 5035 | **RHD4-02-002-C052-(ICT)-Information and Communication Technologies Ducts** | 2027-06-01 → 2027-06-02 (+1d) | 2027-06-24 → 2027-06-26 (+2d) |  |  |
| RHD4CZ6C052ICT2100 | Excavation of HDPE Ducts for ICT Network - (RD-C-5 /2)-Z6-C052-ICT | 2027-06-01 → 2027-06-02 (+1d) | 2027-06-07 → 2027-06-08 (+1d) |  | -95d → -96d |
| RHD4CZ6C052ICT2200 | Installation of HDPE Ducts for ICT Network - (RD-C-5 /2)-Z6-C052-ICT | 2027-06-08 → 2027-06-09 (+1d) | 2027-06-17 → 2027-06-19 (+2d) |  | -95d → -96d |
| RHD4CZ6C052ICT2400 | Backfilling of HDPE Ducts for ICT Network - (RD-C-5 /2)-Z6-C052-ICT | 2027-06-19 → 2027-06-20 (+1d) | 2027-06-24 → 2027-06-26 (+2d) |  | -95d → -96d |
| 5036 | **RHD4-02-002-C052-(ICT)-Information and Communication Technologies Manholes** | 2027-06-08 → 2027-06-09 (+1d) | 2027-06-14 → 2027-06-15 (+1d) |  |  |
| RHD4CZ6C052ICT5100 | Excavation for Manholes for ICT Network - (RD-C-5 /2)-Z6-C052-ICT | 2027-06-08 → 2027-06-09 (+1d) | 2027-06-10 → 2027-06-12 (+2d) |  | -92d → -93d |
| RHD4CZ6C052ICT5200 | Installation of Manholes for ICT Network - (RD-C-5 /2)-Z6-C052-ICT | 2027-06-12 → 2027-06-13 (+1d) | 2027-06-14 → 2027-06-15 (+1d) |  | -92d → -93d |
| 5037 | **RHD4-02-002-C052-(ICT)-Information and Communication Technologies Road Crossings** |  | 2027-02-23 → 2027-02-11 (-12d) |  |  |
| RHD4CZ6C052ICT3100 | Excavation for Road Crossings for ICT Network - (RD-C-5 /2)-Z6-C052-ICT |  | 2027-01-28 → 2027-01-30 (+2d) |  | -157d → -155d |
| RHD4CZ6C052ICT3200 | Installation of Road Crossings for ICT Network - (RD-C-5 /2)-Z6-C052-ICT |  | 2027-02-16 → 2027-02-06 (-10d) |  | -170d → -158d |
| RHD4CZ6C052ICT3300 | Pouring of Road Crossings for ICT Network - (RD-C-5 /2)-Z6-C052-ICT |  | 2027-02-20 → 2027-02-09 (-11d) |  | -170d → -158d |
| RHD4CZ6C052ICT3400 | Backfilling of Road Crossings for ICT Network - (RD-C-5 /2)-Z6-C052-ICT |  | 2027-02-23 → 2027-02-11 (-12d) |  | -170d → -158d |
| 5055 | **RHD4-02-002-Z6-A02** |  | 2027-07-24 → 2027-07-22 (-2d) |  |  |
| 5234 | **RHD4-02-002-Z6-A02-Road Works - RD** |  | 2027-07-24 → 2027-07-22 (-2d) |  |  |
| 5236 | **RHD4-02-002-A02-(RD)-Aggregate Base Course** | 2027-01-28 → 2026-11-11 (-78d) | 2027-01-30 → 2027-01-31 (+1d) |  |  |
| RHD4CZ6A02RD2100 | Supply, lay and compaction Aggregate base course compacted thickness 300 mmfor Roads - (RD-A-2)-Z6-A02-RD | 2027-01-28 → 2026-11-11 A (-78d) | 2027-01-30 → 2027-01-31 (+1d) | 0% → 80% | -145d → -146d |
| 5237 | **RHD4-02-002-A02-(RD)-Bituminous base course Two Layers, including (MC1)&(RC2)** | 2027-03-02 → 2027-02-15 (-15d) | 2027-07-07 → 2027-07-06 (-1d) |  |  |
| RHD4CZ6A02RD3100 | Supply, lay and Asphaltic base course including Prime Coat (MC1) for 1st Layer - (RD-A-2)-Z6-A02-RD | 2027-03-02 → 2027-02-15 (-15d) | 2027-03-03 → 2027-02-16 (-15d) |  | -170d → -158d |
| RHD4CZ6A02RD3200 | Supply, lay and Asphaltic base course including Tack Coat (RC2) for 2nd Layer - (RD-A-2)-Z6-A02-RD | 2027-07-06 → 2027-07-05 (-1d) | 2027-07-07 → 2027-07-06 (-1d) |  | -161d → -160d |
| 5239 | **RHD4-02-002-A02-(RD)-Precast Concrete Curb** | 2027-07-08 → 2027-07-07 (-1d) | 2027-07-13 → 2027-07-12 (-1d) |  |  |
| RHD4CZ6A02RD5100 | Supply and installation Precast Concrete Kerb for Roads - (RD-A-2)-Z6-A02-RD | 2027-07-08 → 2027-07-07 (-1d) | 2027-07-13 → 2027-07-12 (-1d) |  | -161d → -160d |
| 5242 | **RHD4-02-002-A02-(RD)-Traffic Signage** | 2027-07-14 → 2027-07-13 (-1d) | 2027-07-20 → 2027-07-19 (-1d) |  |  |
| RHD4CZ6A02RD8100 | Installation of Traffic Signage for Road Network - (RD-A-2)-Z6-A02-RD | 2027-07-14 → 2027-07-13 (-1d) | 2027-07-20 → 2027-07-19 (-1d) |  | -161d → -160d |
| 5238 | **RHD4-02-002-A02-(RD)-Bituminous concrete wearing course including tack coat (RC2)** | 2027-07-14 → 2027-07-13 (-1d) | 2027-07-15 → 2027-07-14 (-1d) |  |  |
| RHD4CZ6A02RD4100 | Supply, lay and compaction Asphaltic wearing course including tack Coat (RC2)for Road Network - (RD-A-2)-Z6-A02-RD | 2027-07-14 → 2027-07-13 (-1d) | 2027-07-15 → 2027-07-14 (-1d) |  | -157d → -156d |
| 5241 | **RHD4-02-002-A02-(RD)-Pavement Marking** | 2027-07-21 → 2027-07-20 (-1d) | 2027-07-24 → 2027-07-22 (-2d) |  |  |
| RHD4CZ6A02RD7100 | Pavement Markings for Road Network - (RD-A-2)-Z6-A02-RD | 2027-07-21 → 2027-07-20 (-1d) | 2027-07-24 → 2027-07-22 (-2d) |  | -161d → -160d |
| 5059 | **RHD4-02-002-Z6-A02-Storm Network - ST** | 2026-07-27 → 2026-08-04 (+8d) | 2027-02-08 → 2027-02-09 (+1d) |  |  |
| 5076 | **RHD4-02-002-A02-(ST)-MH Works - 1200 mm diameter** | 2026-07-27 → 2026-08-04 (+8d) | 2027-01-30 → 2027-01-31 (+1d) |  |  |
| RHD4CZ6A02ST3200 | Installation of Base for MH 1200 mm - (RD-A-2)-Z6-A02-ST | 2026-07-27 A → 2026-08-06 A (+10d) |  |  |  |
| RHD4CZ6A02ST3400 | Steel Cover for MH 1200 mm - (RD-A-2)-Z6-A02-ST | 2027-01-26 → 2027-01-27 (+1d) | 2027-01-27 → 2027-01-28 (+1d) |  | -195d → -194d |
| RHD4CZ6A02ST3500 | Finishing, Benching, Testing works for MH 1200 mm - (RD-A-2)-Z6-A02-ST | 2027-01-28 → 2027-01-30 (+2d) | 2027-01-30 → 2027-01-31 (+1d) |  | -195d → -194d |
| 5061 | **RHD4-02-002-A02-(ST)-GRP Pipes - 500 mm diameter** |  | 2027-01-27 → 2027-01-28 (+1d) |  |  |
| RHD4CZ6A02ST1401 | Primary Test for GRP Pipe Line 500 mm - (RD-A-2)-Z6-A02-ST | 2027-01-26 → 2027-01-27 (+1d) | 2027-01-27 → 2027-01-28 (+1d) |  | -180d → -181d |
| 5060 | **RHD4-02-002-A02-(ST)-GRP Pipes - 400 mm diameter** |  | 2027-01-27 → 2027-01-28 (+1d) |  |  |
| RHD4CZ6A02ST1400 | Primary Test for GRP Pipe Line 400 mm - (RD-A-2)-Z6-A02-ST | 2027-01-26 → 2027-01-27 (+1d) | 2027-01-27 → 2027-01-28 (+1d) |  | -180d → -181d |
| 5074 | **RHD4-02-002-A02-(ST)-UPVC Pipes - 300 mm diameter** |  | 2027-02-08 → 2027-02-09 (+1d) |  |  |
| RHD4CZ6A02ST2100 | Excavation works for UPVC Pipe Line 300 mm - (RD-A-2)-Z6-A02-ST |  | 2027-01-27 → 2027-01-28 (+1d) |  | -172d → -173d |
| RHD4CZ6A02ST2200 | Bedding works for UPVC Pipe Line 300 mm - (RD-A-2)-Z6-A02-ST |  | 2027-01-30 → 2027-01-31 (+1d) |  | -172d → -173d |
| RHD4CZ6A02ST2300 | Installing for UPVC Pipe Line 300 mm - (RD-A-2)-Z6-A02-ST |  | 2027-02-03 → 2027-02-04 (+1d) |  | -174d → -175d |
| RHD4CZ6A02ST2500 | Backfilling and warning tape works for UPVC Pipe Line 300 mm - (RD-A-2)-Z6-A02-ST |  | 2027-02-08 → 2027-02-09 (+1d) |  | -174d → -175d |
| RHD4CZ6A02ST2400 | Primary Test for UPVC Pipe Line 300 mm - (RD-A-2)-Z6-A02-ST | 2027-02-04 → 2027-02-06 (+2d) | 2027-02-06 → 2027-02-07 (+1d) |  | -174d → -175d |
| 5082 | **RHD4-02-002-A02-(ST)-Concrete Encasement** | 2027-02-02 → 2027-02-03 (+1d) | 2027-02-03 → 2027-02-04 (+1d) |  |  |
| RHD4CZ6A02ST6100 | Pipe Encasement for Storm Pipelines - (RD-A-2)-Z6-A02-ST | 2027-02-02 → 2027-02-03 (+1d) | 2027-02-03 → 2027-02-04 (+1d) |  | -172d → -173d |
| 5083 | **RHD4-02-002-Z6-A02-Catch Basin - ST** |  | 2027-02-06 → 2027-02-07 (+1d) |  |  |

| ID | Task | Start | Finish | Total float |
| --- | --- | --- | --- | --- |
| 5084 | **RHD4-02-002-A02-(ST)-Single Catch Basin Works** |  | 2027-02-06 → 2027-02-07 (+1d) |  |
| RHD4CZ6A02ST7100 | Excavation works for Single Catch Basin - (RD-A-2)-Z6-A02-ST |  | 2027-01-27 → 2027-01-28 (+1d) | -174d → -175d |
| RHD4CZ6A02ST7200 | PC Blinding, Installation and Pipe connection for Single Catch Basin - (RD-A-2)-Z6-A02-ST |  | 2027-01-30 → 2027-01-31 (+1d) | -174d → -175d |
| RHD4CZ6A02ST7300 | Rings & C.Slab & Final Backfill for Single Catch Basin - (RD-A-2)-Z6-A02-ST |  | 2027-02-01 → 2027-02-02 (+1d) | -174d → -175d |
| RHD4CZ6A02ST7400 | Steel Cover for Single Catch Basin - (RD-A-2)-Z6-A02-ST | 2027-02-02 → 2027-02-03 (+1d) | 2027-02-03 → 2027-02-04 (+1d) | -170d → -171d |
| RHD4CZ6A02ST7500 | Finishing and Insulation works for Single Catch Basin - (RD-A-2)-Z6-A02-ST | 2027-02-04 → 2027-02-06 (+2d) | 2027-02-06 → 2027-02-07 (+1d) | -170d → -171d |
| 3973 | **RHD4-02-002-Z6-A02-Sewage Network - SW** |  | 2027-02-03 → 2027-02-04 (+1d) |  |
| 3794 | **RHD4-02-002-A02-(SW)-MH Works - 1200 mm diameter** |  | 2027-02-03 → 2027-02-04 (+1d) |  |
| RHD4CZ6A02SW3200 | Installation of Base for MH 1200 mm - (RD-A-2)-Z6-A02-SW | 2027-01-26 → 2027-01-27 (+1d) | 2027-01-27 → 2027-01-28 (+1d) | -193d → -189d |
| RHD4CZ6A02SW3300 | MH Ring and C.Slab works and Backfilling works for MH 1200 mm - (RD-A-2)-Z6-A02-SW | 2027-01-28 → 2027-01-30 (+2d) | 2027-01-30 → 2027-01-31 (+1d) | -193d → -189d |
| RHD4CZ6A02SW3400 | Steel Cover for MH 1200 mm - (RD-A-2)-Z6-A02-SW | 2027-01-31 → 2027-02-01 (+1d) | 2027-02-01 → 2027-02-02 (+1d) | -193d → -189d |
| RHD4CZ6A02SW3500 | Finishing, Benching, Testing works for MH 1200 mm - (RD-A-2)-Z6-A02-SW | 2027-02-02 → 2027-02-03 (+1d) | 2027-02-03 → 2027-02-04 (+1d) | -193d → -189d |
| 5145 | **RHD4-02-002-Z6-A02-Potable Network - PT** | 2027-02-09 → 2027-02-10 (+1d) | 2027-03-04 → 2027-03-06 (+2d) |  |
| 4962 | **RHD4-02-002-A02-(PT)-Gate Valves (Direct Buried)** | 2027-02-14 → 2027-02-15 (+1d) | 2027-02-23 → 2027-02-24 (+1d) |  |
| RHD4CZ6A02PT3100 | Installation for Direct Buried Gate Valves - (RD-A-2)-Z6-A02-PT | 2027-02-14 → 2027-02-15 (+1d) | 2027-02-15 → 2027-02-16 (+1d) | -174d → -175d |
| RHD4CZ6A02PT3200 | Stem and Service box for Direct Buried Gate Valves - (RD-A-2)-Z6-A02-PT | 2027-02-21 → 2027-02-23 (+2d) | 2027-02-23 → 2027-02-24 (+1d) | -174d → -175d |
| 4969 | **RHD4-02-002-A02-(PT)-Fire Hydrant** | 2027-02-21 → 2027-02-23 (+2d) | 2027-03-04 → 2027-03-06 (+2d) |  |
| RHD4CZ6A02PT4100 | Excavation and Bedding and Pipe Installation for Fire Hydrant - (RD-A-2)-Z6-A02-PT | 2027-02-21 → 2027-02-23 (+2d) | 2027-02-23 → 2027-02-24 (+1d) | -169d → -170d |
| RHD4CZ6A02PT4200 | Valve Installation for Fire Hydrant - (RD-A-2)-Z6-A02-PT | 2027-02-24 → 2027-02-25 (+1d) | 2027-02-25 → 2027-02-27 (+2d) | -169d → -170d |
| RHD4CZ6A02PT4300 | Stem for Fire Hydrant - (RD-A-2)-Z6-A02-PT | 2027-02-27 → 2027-02-28 (+1d) | 2027-02-28 → 2027-03-01 (+1d) | -169d → -170d |
| RHD4CZ6A02PT4400 | Fire Installation for Fire Hydrant - (RD-A-2)-Z6-A02-PT | 2027-03-01 → 2027-03-02 (+1d) | 2027-03-02 → 2027-03-03 (+1d) | -169d → -170d |
| RHD4CZ6A02PT4500 | Protection Barriers for Fire Hydrant - (RD-A-2)-Z6-A02-PT | 2027-03-03 → 2027-03-04 (+1d) | 2027-03-04 → 2027-03-06 (+2d) | -169d → -170d |
| 4958 | **RHD4-02-002-A02-(PT)-HDPE Pipes - 160 mm diameter** | 2027-02-09 → 2027-02-10 (+1d) | 2027-02-20 → 2027-02-21 (+1d) |  |
| RHD4CZ6A02PT1101 | Excavation works for HDPE Pipline 160 mm - (RD-A-2)-Z6-A02-PT | 2027-02-09 → 2027-02-10 (+1d) | 2027-02-10 → 2027-02-11 (+1d) | -174d → -175d |
| RHD4CZ6A02PT1201 | Bedding works for HDPE Pipline 160 mm - (RD-A-2)-Z6-A02-PT | 2027-02-11 → 2027-02-13 (+2d) | 2027-02-13 → 2027-02-14 (+1d) | -174d → -175d |
| RHD4CZ6A02PT1301 | Installing for HDPE Pipline 160 mm - (RD-A-2)-Z6-A02-PT | 2027-02-14 → 2027-02-15 (+1d) | 2027-02-15 → 2027-02-16 (+1d) | -174d → -175d |
| RHD4CZ6A02PT1401 | Primary Test for HDPE Pipline 160 mm - (RD-A-2)-Z6-A02-PT | 2027-02-16 → 2027-02-17 (+1d) | 2027-02-17 → 2027-02-18 (+1d) | -174d → -175d |
| RHD4CZ6A02PT1501 | Backfilling and warning tape works for HDPE Pipline 160 mm - (RD-A-2)-Z6-A02-PT | 2027-02-18 → 2027-02-20 (+2d) | 2027-02-20 → 2027-02-21 (+1d) | -174d → -175d |
| 5201 | **RHD4-02-002-Z6-A02-Low Voltage Network - LV** | 2027-02-11 → 2027-02-13 (+2d) | 2027-03-21 → 2027-03-07 (-14d) |  |
| 5202 | **RHD4-02-002-A02-(LV)-Low Voltage duct banks** | 2027-02-11 → 2027-02-13 (+2d) | 2027-02-21 → 2027-02-23 (+2d) |  |
| RHD4CZ6A02LV2100 | Excavation of Duct Banks for Low Voltage Network - (RD-A-2)-Z6-A02-LV | 2027-02-11 → 2027-02-13 (+2d) | 2027-02-13 → 2027-02-14 (+1d) | -160d → -161d |
| RHD4CZ6A02LV2200 | Installation of Duct Banks for Low Voltage Network - (RD-A-2)-Z6-A02-LV | 2027-02-14 → 2027-02-15 (+1d) | 2027-02-16 → 2027-02-17 (+1d) | -160d → -161d |
| RHD4CZ6A02LV2300 | Pouring of Duct Banks for Low Voltage Network - (RD-A-2)-Z6-A02-LV | 2027-02-17 → 2027-02-18 (+1d) | 2027-02-18 → 2027-02-20 (+2d) | -160d → -161d |
| RHD4CZ6A02LV2400 | Backfilling of Duct Banks for Low Voltage Network - (RD-A-2)-Z6-A02-LV | 2027-02-20 → 2027-02-21 (+1d) | 2027-02-21 → 2027-02-23 (+2d) | -158d → -159d |
| 5203 | **RHD4-02-002-A02-(LV)-Low Voltage Drawpit** | 2027-03-04 → 2027-02-21 (-11d) | 2027-03-08 → 2027-02-25 (-11d) |  |
| RHD4CZ6A02LV5100 | Excavation of Drawpit size 900x900x1000mm for Low Voltage Network - (RD-A-2)-Z6-A02-LV | 2027-03-04 → 2027-02-21 (-11d) | 2027-03-06 → 2027-02-23 (-11d) | -170d → -161d |
| RHD4CZ6A02LV5200 | Installation of Drawpit size 900x900x1000mm for Low Voltage Network - (RD-A-2)-Z6-A02-LV | 2027-03-07 → 2027-02-24 (-11d) | 2027-03-08 → 2027-02-25 (-11d) | -170d → -161d |
| 5204 | **RHD4-02-002-A02-(LV)-Low Voltage cables** | 2027-03-13 → 2027-02-27 (-14d) | 2027-03-21 → 2027-03-07 (-14d) |  |
| RHD4CZ6A02LV3100 | Excavation for Low Voltage Cables for Low Voltage Network - (RD-A-2)-Z6-A02-LV | 2027-03-13 → 2027-02-27 (-14d) | 2027-03-14 → 2027-02-28 (-14d) | -170d → -161d |
| RHD4CZ6A02LV3200 | Cable Laying of Low Voltage Cables for Low Voltage Network - (RD-A-2)-Z6-A02-LV | 2027-03-15 → 2027-03-01 (-14d) | 2027-03-16 → 2027-03-02 (-14d) | -170d → -161d |
| RHD4CZ6A02LV3300 | Warning tape and Backfill for Low Voltage Cables for Low Voltage Network - (RD-A-2)-Z6-A02-LV | 2027-03-17 → 2027-03-03 (-14d) | 2027-03-18 → 2027-03-04 (-14d) | -170d → -161d |
| RHD4CZ6A02LV3400 | Testing of Low Voltage Cables for Low Voltage Network - (RD-A-2)-Z6-A02-LV | 2027-03-20 → 2027-03-06 (-14d) | 2027-03-21 → 2027-03-07 (-14d) | -170d → -161d |
| 5207 | **RHD4-02-002-Z6-A02-Street Lighting Network - SL** | 2027-04-14 → 2027-04-15 (+1d) | 2027-05-06 → 2027-05-08 (+2d) |  |
| 5210 | **RHD4-02-002-A02-(SL)-Street Lighting cables** | 2027-04-14 → 2027-04-15 (+1d) | 2027-04-22 → 2027-04-24 (+2d) |  |
| RHD4CZ6A02SL3100 | Excavation for Street Lighting Cables for Street Lighting Network - (RD-A-2)-Z6-A02-SL | 2027-04-14 → 2027-04-15 (+1d) | 2027-04-15 → 2027-04-17 (+2d) | -150d → -151d |
| RHD4CZ6A02SL3200 | Cable Laying of Street Lighting Cables for Street Lighting Network - (RD-A-2)-Z6-A02-SL | 2027-04-17 → 2027-04-18 (+1d) | 2027-04-18 → 2027-04-19 (+1d) | -150d → -151d |
| RHD4CZ6A02SL3300 | Warning tape and Backfill for Street Lighting Cables for Street Lighting Network - (RD-A-2)-Z6-A02-SL | 2027-04-19 → 2027-04-20 (+1d) | 2027-04-20 → 2027-04-21 (+1d) | -150d → -151d |
| RHD4CZ6A02SL3400 | Testing of Street Lighting Cables for Street Lighting Network - (RD-A-2)-Z6-A02-SL | 2027-04-21 → 2027-04-22 (+1d) | 2027-04-22 → 2027-04-24 (+2d) | -150d → -151d |
| 5211 | **RHD4-02-002-A02-(SL)-Street Lighting Poles** | 2027-04-24 → 2027-04-25 (+1d) | 2027-05-06 → 2027-05-08 (+2d) |  |
| RHD4CZ6A02SL1100 | Excavation for RC Base for Lighting Poles for Street Lighting Network - (RD-A-2)-Z6-A02-SL | 2027-04-24 → 2027-04-25 (+1d) | 2027-04-25 → 2027-04-26 (+1d) | -150d → -151d |
| RHD4CZ6A02SL1200 | Installation for RC Base for Lighting Poles for Street Lighting Network - (RD-A-2)-Z6-A02-SL | 2027-04-26 → 2027-04-27 (+1d) | 2027-04-27 → 2027-04-28 (+1d) | -150d → -151d |
| RHD4CZ6A02SL1300 | Backfill for RC Base for Lighting Poles for Street Lighting Network - (RD-A-2)-Z6-A02-SL | 2027-04-28 → 2027-04-29 (+1d) | 2027-04-29 → 2027-05-01 (+2d) | -150d → -151d |
| RHD4CZ6A02SL1400 | Installation for Lighting Poles for Street Lighting Network - (RD-A-2)-Z6-A02-SL | 2027-05-01 → 2027-05-02 (+1d) | 2027-05-02 → 2027-05-03 (+1d) | -150d → -151d |
| RHD4CZ6A02SL1500 | Luminaire Installation for Lighting Poles for Street Lighting Network - (RD-A-2)-Z6-A02-SL | 2027-05-05 → 2027-05-06 (+1d) | 2027-05-06 → 2027-05-08 (+2d) | -150d → -151d |
| 5213 | **RHD4-02-002-A02-(SL)-Street Lighting Earthing System** | 2027-05-03 → 2027-05-04 (+1d) | 2027-05-04 → 2027-05-05 (+1d) |  |
| RHD4CZ6A02SL6100 | Installation of Earthing for Lighting Poles and Fedder Pillers for Street Lighting Network - (RD-A-2)-Z6-A02-SL | 2027-05-03 → 2027-05-04 (+1d) | 2027-05-04 → 2027-05-05 (+1d) | -150d → -151d |
| 5219 | **RHD4-02-002-Z6-A02-Telecommunications Network - TC** | 2027-05-08 → 2027-05-09 (+1d) | 2027-05-20 → 2027-05-22 (+2d) |  |
| 5220 | **RHD4-02-002-A02-(TC)-Telecommunications Ducts** | 2027-05-08 → 2027-05-09 (+1d) | 2027-05-20 → 2027-05-22 (+2d) |  |
| RHD4CZ6A02TC2100 | Excavation of HDPE Ducts for Telecom Network - (RD-A-2)-Z6-A02-TC | 2027-05-08 → 2027-05-09 (+1d) | 2027-05-09 → 2027-05-10 (+1d) | -144d → -145d |
| RHD4CZ6A02TC2200 | Installation of HDPE Ducts for Telecom Network - (RD-A-2)-Z6-A02-TC | 2027-05-10 → 2027-05-11 (+1d) | 2027-05-12 → 2027-05-13 (+1d) | -143d → -144d |
| RHD4CZ6A02TC2400 | Backfilling of HDPE Ducts for Telecom Network - (RD-A-2)-Z6-A02-TC | 2027-05-19 → 2027-05-20 (+1d) | 2027-05-20 → 2027-05-22 (+2d) | -144d → -145d |
| 5221 | **RHD4-02-002-A02-(TC)-Telecommunications Manholes** | 2027-05-10 → 2027-05-11 (+1d) | 2027-05-13 → 2027-05-19 (+6d) |  |
| RHD4CZ6A02TC5100 | Excavation for Manholes for Telecom Network - (RD-A-2)-Z6-A02-TC | 2027-05-10 → 2027-05-11 (+1d) | 2027-05-11 → 2027-05-12 (+1d) | -144d → -145d |
| RHD4CZ6A02TC5200 | Installation of Manholes for Telecom Network - (RD-A-2)-Z6-A02-TC | 2027-05-12 → 2027-05-13 (+1d) | 2027-05-13 → 2027-05-19 (+6d) | -144d → -145d |
| 5223 | **RHD4-02-002-Z6-A02-Information and Communication Technologies - ICT** | 2027-05-22 → 2027-05-23 (+1d) | 2027-06-01 → 2027-06-02 (+1d) |  |
| 5224 | **RHD4-02-002-A02-(ICT)-Information and Communication Technologies Ducts** | 2027-05-22 → 2027-05-23 (+1d) | 2027-06-01 → 2027-06-02 (+1d) |  |
| RHD4CZ6A02ICT2100 | Excavation of HDPE Ducts for ICT Network - (RD-A-2)-Z6-A02-ICT | 2027-05-22 → 2027-05-23 (+1d) | 2027-05-24 → 2027-05-25 (+1d) | -144d → -145d |
| RHD4CZ6A02ICT2200 | Installation of HDPE Ducts for ICT Network - (RD-A-2)-Z6-A02-ICT | 2027-05-25 → 2027-05-26 (+1d) | 2027-05-29 → 2027-05-30 (+1d) | -144d → -145d |
| RHD4CZ6A02ICT2400 | Backfilling of HDPE Ducts for ICT Network - (RD-A-2)-Z6-A02-ICT | 2027-05-30 → 2027-05-31 (+1d) | 2027-06-01 → 2027-06-02 (+1d) | -144d → -145d |
| 5225 | **RHD4-02-002-A02-(ICT)-Information and Communication Technologies Manholes** | 2027-05-25 → 2027-05-26 (+1d) | 2027-05-29 → 2027-05-30 (+1d) |  |

| ID | Task | Start | Finish | Complete | Total float |
| --- | --- | --- | --- | --- | --- |
| RHD4CZ6A02ICT5100 | Excavation for Manholes for ICT Network - (RD-A-2)-Z6-A02-ICT | 2027-05-25 → 2027-05-26 (+1d) | 2027-05-26 → 2027-05-27 (+1d) |  | -144d → -145d |
| RHD4CZ6A02ICT5200 | Installation of Manholes for ICT Network - (RD-A-2)-Z6-A02-ICT | 2027-05-27 → 2027-05-29 (+2d) | 2027-05-29 → 2027-05-30 (+1d) |  | -144d → -145d |
| 5227 | **RHD4-02-002-Z6-A02-Security Network - CCTV** | 2027-06-22 → 2027-06-21 (-1d) | 2027-07-05 → 2027-07-04 (-1d) |  |  |
| 5229 | **RHD4-02-002-A02-(CCTV)-CCTV Poles** | 2027-06-22 → 2027-06-21 (-1d) | 2027-06-30 → 2027-06-29 (-1d) |  |  |
| RHD4CZ6A02CCTV1100 | Excavation for RC Base for CCTV Poles for Security Network - (RD-A-2)-Z6-A02-CCTV | 2027-06-22 → 2027-06-21 (-1d) | 2027-06-23 → 2027-06-22 (-1d) |  | -161d → -160d |
| RHD4CZ6A02CCTV1200 | Installation for RC Base for CCTV Poles for Security Network - (RD-A-2)-Z6-A02-CCTV | 2027-06-24 → 2027-06-23 (-1d) | 2027-06-26 → 2027-06-24 (-2d) |  | -161d → -160d |
| RHD4CZ6A02CCTV1300 | Backfill for RC Base for CCTV Poles for Security Network - (RD-A-2)-Z6-A02-CCTV | 2027-06-27 → 2027-06-26 (-1d) | 2027-06-28 → 2027-06-27 (-1d) |  | -161d → -160d |
| RHD4CZ6A02CCTV1400 | Installation for CCTV Poles for Security Network - (RD-A-2)-Z6-A02-CCTV | 2027-06-29 → 2027-06-28 (-1d) | 2027-06-30 → 2027-06-29 (-1d) |  | -161d → -160d |
| 5230 | **RHD4-02-002-A02-(CCTV)-Camera** | 2027-07-01 → 2027-06-30 (-1d) | 2027-07-03 → 2027-07-01 (-2d) |  |  |
| RHD4CZ6A02CCTV3100 | Installation for Cameras for Security Network - (RD-A-2)-Z6-A02-CCTV | 2027-07-01 → 2027-06-30 (-1d) | 2027-07-03 → 2027-07-01 (-2d) |  | -161d → -160d |
| 5233 | **RHD4-02-002-A02-(CCTV)-CCTV Panels and Components** | 2027-07-04 → 2027-07-03 (-1d) | 2027-07-05 → 2027-07-04 (-1d) |  |  |
| RHD4CZ6A02CCTV6100 | Installation for CCTV Panels for Security Network - (RD-A-2)-Z6-A02-CCTV | 2027-07-04 → 2027-07-03 (-1d) | 2027-07-05 → 2027-07-04 (-1d) |  | -161d → -160d |
| 5433 | **RHD4-02-002-Z6-RA01** |  | 2027-09-05 → 2027-09-06 (+1d) |  |  |
| 5612 | **RHD4-02-002-Z6-RA01-Road Works - RD** |  | 2027-09-05 → 2027-09-06 (+1d) |  |  |
| 5614 | **RHD4-02-002-RA01-(RD)-Aggregate Base Course** | 2027-01-28 → 2026-11-10 (-79d) | 2027-02-01 → 2026-11-14 (-79d) |  |  |
| RHD4CZ6RA01RD2100 | Supply, lay and compaction Aggregate base course compacted thickness 300 mmfor Roads - (ROUND-01)-Z6-RA01-RD | 2027-01-28 → 2026-11-10 A (-79d) | 2027-02-01 → 2026-11-14 A (-79d) | 0% → 100% | -139d → none |
| 5615 | **RHD4-02-002-RA01-(RD)-Bituminous base course Two Layers, including (MC1)&(RC2)** | 2027-03-08 → 2027-03-02 (-6d) | 2027-08-12 → 2027-08-14 (+2d) |  |  |
| RHD4CZ6RA01RD3100 | Supply, lay and Asphaltic base course including Prime Coat (MC1) for 1st Layer - (ROUND-01)-Z6-RA01-RD | 2027-03-08 → 2027-03-02 (-6d) | 2027-03-13 → 2027-03-03 (-10d) |  | -167d → -162d |
| RHD4CZ6RA01RD3200 | Supply, lay and Asphaltic base course including Tack Coat (RC2) for 2nd Layer - (ROUND-01)-Z6-RA01-RD | 2027-08-11 → 2027-08-12 (+1d) | 2027-08-12 → 2027-08-14 (+2d) |  | -150d → -151d |
| 5617 | **RHD4-02-002-RA01-(RD)-Precast Concrete Curb** | 2027-08-14 → 2027-08-15 (+1d) | 2027-08-16 → 2027-08-17 (+1d) |  |  |
| RHD4CZ6RA01RD5100 | Supply and installation Precast Concrete Kerb for Roads - (ROUND-01)-Z6-RA01-RD | 2027-08-14 → 2027-08-15 (+1d) | 2027-08-16 → 2027-08-17 (+1d) |  | -150d → -151d |
| 5620 | **RHD4-02-002-RA01-(RD)-Traffic Signage** | 2027-08-17 → 2027-08-18 (+1d) | 2027-08-28 → 2027-08-29 (+1d) |  |  |
| RHD4CZ6RA01RD8100 | Installation of Traffic Signage for Road Network - (ROUND-01)-Z6-RA01-RD | 2027-08-17 → 2027-08-18 (+1d) | 2027-08-28 → 2027-08-29 (+1d) |  | -145d → -146d |
| 5616 | **RHD4-02-002-RA01-(RD)-Bituminous concrete wearing course including tack coat (RC2)** | 2027-08-17 → 2027-08-18 (+1d) | 2027-08-18 → 2027-08-19 (+1d) |  |  |
| RHD4CZ6RA01RD4100 | Supply, lay and compaction Asphaltic wearing course including tack Coat (RC2)for Road Network - (ROUND-01)-Z6-RA01-RD | 2027-08-17 → 2027-08-18 (+1d) | 2027-08-18 → 2027-08-19 (+1d) |  | -150d → -151d |
| 5619 | **RHD4-02-002-RA01-(RD)-Pavement Marking** | 2027-08-19 → 2027-08-21 (+2d) | 2027-09-05 → 2027-09-06 (+1d) |  |  |
| RHD4CZ6RA01RD7100 | Pavement Markings for Road Network - (ROUND-01)-Z6-RA01-RD | 2027-08-19 → 2027-08-21 (+2d) | 2027-08-24 → 2027-08-25 (+1d) |  | -150d → -151d |
| RHD4CZ6RA01RD9100 | Installation for Speed Bump for Road Network - (ROUND-01)-Z6-RA01-RD | 2027-08-25 → 2027-08-26 (+1d) | 2027-09-05 → 2027-09-06 (+1d) |  | -150d → -151d |
| 5585 | **RHD4-02-002-Z6-RA01-Street Lighting Network - SL** | 2027-05-08 → 2027-05-09 (+1d) | 2027-06-14 → 2027-06-15 (+1d) |  |  |
| 5586 | **RHD4-02-002-RA01-(SL)-Street Lighting duct banks** | 2027-05-08 → 2027-05-09 (+1d) | 2027-05-22 → 2027-05-23 (+1d) |  |  |
| RHD4CZ6RA01SL2100 | Excavation of Duct Banks for Street Lighting Network - (ROUND-01)-Z6-RA01-SL | 2027-05-08 → 2027-05-09 (+1d) | 2027-05-09 → 2027-05-10 (+1d) |  | -150d → -151d |
| RHD4CZ6RA01SL2200 | Installation of Duct Banks for Street Lighting Network - (ROUND-01)-Z6-RA01-SL | 2027-05-10 → 2027-05-11 (+1d) | 2027-05-12 → 2027-05-13 (+1d) |  | -150d → -151d |
| RHD4CZ6RA01SL2300 | Pouring of Duct Banks for Street Lighting Network - (ROUND-01)-Z6-RA01-SL | 2027-05-13 → 2027-05-19 (+6d) | 2027-05-19 → 2027-05-20 (+1d) |  | -150d → -151d |
| RHD4CZ6RA01SL2400 | Backfilling of Duct Banks for Street Lighting Network - (ROUND-01)-Z6-RA01-SL | 2027-05-20 → 2027-05-22 (+2d) | 2027-05-22 → 2027-05-23 (+1d) |  | -148d → -149d |
| 5587 | **RHD4-02-002-RA01-(SL)-Street Lighting Drawpit** | 2027-05-20 → 2027-05-22 (+2d) | 2027-05-24 → 2027-05-25 (+1d) |  |  |
| RHD4CZ6RA01SL5100 | Excavation of Drawpit size 600x600x900mm for Street Lighting Network - (ROUND-01)-Z6-RA01-SL | 2027-05-20 → 2027-05-22 (+2d) | 2027-05-22 → 2027-05-23 (+1d) |  | -150d → -151d |
| RHD4CZ6RA01SL5200 | Installation of Drawpit size 600x600x900mm for Street Lighting Network - (ROUND-01)-Z6-RA01-SL | 2027-05-23 → 2027-05-24 (+1d) | 2027-05-24 → 2027-05-25 (+1d) |  | -150d → -151d |
| 5588 | **RHD4-02-002-RA01-(SL)-Street Lighting cables** | 2027-05-25 → 2027-05-26 (+1d) | 2027-06-02 → 2027-06-03 (+1d) |  |  |
| RHD4CZ6RA01SL3100 | Excavation for Street Lighting Cables for Street Lighting Network - (ROUND-01)-Z6-RA01-SL | 2027-05-25 → 2027-05-26 (+1d) | 2027-05-26 → 2027-05-27 (+1d) |  | -150d → -151d |
| RHD4CZ6RA01SL3200 | Cable Laying of Street Lighting Cables for Street Lighting Network - (ROUND-01)-Z6-RA01-SL | 2027-05-27 → 2027-05-29 (+2d) | 2027-05-29 → 2027-05-30 (+1d) |  | -150d → -151d |
| RHD4CZ6RA01SL3300 | Warning tape and Backfill for Street Lighting Cables for Street Lighting Network - (ROUND-01)-Z6-RA01-SL | 2027-05-30 → 2027-05-31 (+1d) | 2027-05-31 → 2027-06-01 (+1d) |  | -150d → -151d |
| RHD4CZ6RA01SL3400 | Testing of Street Lighting Cables for Street Lighting Network - (ROUND-01)-Z6-RA01-SL | 2027-06-01 → 2027-06-02 (+1d) | 2027-06-02 → 2027-06-03 (+1d) |  | -150d → -151d |
| 5589 | **RHD4-02-002-RA01-(SL)-Street Lighting Poles** | 2027-06-03 → 2027-06-05 (+2d) | 2027-06-14 → 2027-06-15 (+1d) |  |  |
| RHD4CZ6RA01SL1100 | Excavation for RC Base for Lighting Poles for Street Lighting Network - (ROUND-01)-Z6-RA01-SL | 2027-06-03 → 2027-06-05 (+2d) | 2027-06-05 → 2027-06-06 (+1d) |  | -150d → -151d |
| RHD4CZ6RA01SL1200 | Installation for RC Base for Lighting Poles for Street Lighting Network - (ROUND-01)-Z6-RA01-SL | 2027-06-06 → 2027-06-07 (+1d) | 2027-06-07 → 2027-06-08 (+1d) |  | -150d → -151d |
| RHD4CZ6RA01SL1300 | Backfill for RC Base for Lighting Poles for Street Lighting Network - (ROUND-01)-Z6-RA01-SL | 2027-06-08 → 2027-06-09 (+1d) | 2027-06-09 → 2027-06-10 (+1d) |  | -150d → -151d |
| RHD4CZ6RA01SL1400 | Installation for Lighting Poles for Street Lighting Network - (ROUND-01)-Z6-RA01-SL | 2027-06-10 → 2027-06-12 (+2d) | 2027-06-12 → 2027-06-13 (+1d) |  | -150d → -151d |
| RHD4CZ6RA01SL1500 | Luminaire Installation for Lighting Poles for Street Lighting Network - (ROUND-01)-Z6-RA01-SL | 2027-06-13 → 2027-06-14 (+1d) | 2027-06-14 → 2027-06-15 (+1d) |  | -150d → -151d |
| 5597 | **RHD4-02-002-Z6-RA01-Telecommunications Network - TC** | 2027-06-15 → 2027-06-16 (+1d) | 2027-06-30 → 2027-07-01 (+1d) |  |  |
| 5598 | **RHD4-02-002-RA01-(TC)-Telecommunications Ducts** | 2027-06-15 → 2027-06-16 (+1d) | 2027-06-21 → 2027-06-22 (+1d) |  |  |
| RHD4CZ6RA01TC2100 | Excavation of HDPE Ducts for Telecom Network - (ROUND-01)-Z6-RA01-TC | 2027-06-15 → 2027-06-16 (+1d) | 2027-06-16 → 2027-06-17 (+1d) |  | -150d → -151d |
| RHD4CZ6RA01TC2200 | Installation of HDPE Ducts for Telecom Network - (ROUND-01)-Z6-RA01-TC | 2027-06-17 → 2027-06-19 (+2d) | 2027-06-19 → 2027-06-20 (+1d) |  | -150d → -151d |
| RHD4CZ6RA01TC2400 | Backfilling of HDPE Ducts for Telecom Network - (ROUND-01)-Z6-RA01-TC | 2027-06-20 → 2027-06-21 (+1d) | 2027-06-21 → 2027-06-22 (+1d) |  | -150d → -151d |
| 491 | **RHD4-02-002-RA01-(TC)-Telecommunications Manholes** | 2027-06-22 → 2027-06-23 (+1d) | 2027-06-30 → 2027-07-01 (+1d) |  |  |
| RHD4CZ6RA01TC5100 | Excavation for Manholes for Telecom Network - (ROUND-01)-Z6-RA01-TC | 2027-06-22 → 2027-06-23 (+1d) | 2027-06-26 → 2027-06-27 (+1d) |  | -147d → -148d |
| RHD4CZ6RA01TC5200 | Installation of Manholes for Telecom Network - (ROUND-01)-Z6-RA01-TC | 2027-06-27 → 2027-06-28 (+1d) | 2027-06-30 → 2027-07-01 (+1d) |  | -147d → -148d |
| 5605 | **RHD4-02-002-Z6-RA01-Security Network - CCTV** | 2027-06-22 → 2027-06-23 (+1d) | 2027-08-10 → 2027-08-11 (+1d) |  |  |
| 5606 | **RHD4-02-002-RA01-(CCTV)-Civil Works** | 2027-06-22 → 2027-06-23 (+1d) | 2027-07-04 → 2027-07-05 (+1d) |  |  |
| RHD4CZ6RA01CCTV2100 | Civil Works for Security Network - (ROUND-01)-Z6-RA01-CCTV | 2027-06-22 → 2027-06-23 (+1d) | 2027-07-04 → 2027-07-05 (+1d) |  | -150d → -151d |
| 5607 | **RHD4-02-002-RA01-(CCTV)-CCTV Poles** | 2027-07-05 → 2027-07-06 (+1d) | 2027-07-15 → 2027-07-17 (+2d) |  |  |
| RHD4CZ6RA01CCTV1100 | Excavation for RC Base for CCTV Poles for Security Network - (ROUND-01)-Z6-RA01-CCTV | 2027-07-05 → 2027-07-06 (+1d) | 2027-07-06 → 2027-07-07 (+1d) |  | -150d → -151d |
| RHD4CZ6RA01CCTV1200 | Installation for RC Base for CCTV Poles for Security Network - (ROUND-01)-Z6-RA01-CCTV | 2027-07-07 → 2027-07-08 (+1d) | 2027-07-08 → 2027-07-10 (+2d) |  | -150d → -151d |
| RHD4CZ6RA01CCTV1300 | Backfill for RC Base for CCTV Poles for Security Network - (ROUND-01)-Z6-RA01-CCTV | 2027-07-10 → 2027-07-11 (+1d) | 2027-07-11 → 2027-07-12 (+1d) |  | -150d → -151d |
| RHD4CZ6RA01CCTV1400 | Installation for CCTV Poles for Security Network - (ROUND-01)-Z6-RA01-CCTV | 2027-07-12 → 2027-07-13 (+1d) | 2027-07-13 → 2027-07-14 (+1d) |  | -150d → -151d |
| RHD4CZ6RA01CCTV1500 | Protection post Installation for CCTV Poles for Security Network - (ROUND-01)-Z6-RA01-CCTV | 2027-07-14 → 2027-07-15 (+1d) | 2027-07-15 → 2027-07-17 (+2d) |  | -145d → -146d |
| 5608 | **RHD4-02-002-RA01-(CCTV)-Camera** | 2027-07-17 → 2027-07-18 (+1d) | 2027-07-18 → 2027-07-19 (+1d) |  |  |
| RHD4CZ6RA01CCTV3100 | Installation for Cameras for Security Network - (ROUND-01)-Z6-RA01-CCTV | 2027-07-17 → 2027-07-18 (+1d) | 2027-07-18 → 2027-07-19 (+1d) |  | -150d → -151d |
| 5609 | **RHD4-02-002-RA01-(CCTV)-Power and Infrastructure** | 2027-07-14 → 2027-07-15 (+1d) | 2027-07-25 → 2027-07-26 (+1d) |  |  |
| RHD4CZ6RA01CCTV4100 | Installation of Power outlet, UPS and midspan for PTZ Camerafor Cameras for Security Network - (ROUND-01)-Z6-RA01-CCTV | 2027-07-14 → 2027-07-15 (+1d) | 2027-07-15 → 2027-07-17 (+2d) |  | -150d → -151d |
| RHD4CZ6RA01CCTV4200 | Short Range Wireless PoP wireless Bridgefor CCTV Poles for Security Network - (ROUND-01)-Z6-RA01-CCTV | 2027-07-17 → 2027-07-18 (+1d) | 2027-07-18 → 2027-07-19 (+1d) |  | -150d → -151d |

| ID | Task | Start | Finish | Complete | Total float |
| --- | --- | --- | --- | --- | --- |
| RHD4CZ6RA01CCTV4300 | Fiber Optic Cables for 35m height Pole to Main data Center for CCTV Pole for Security Network - (ROUND-01)-Z6-RA01-CCTV | 2027-07-19 → 2027-07-20 (+1d) | 2027-07-25 → 2027-07-26 (+1d) |  | -150d → -151d |
| 5610 | **RHD4-02-002-RA01-(CCTV)-Control Room Equipment** | 2027-07-31 → 2027-08-01 (+1d) | 2027-08-10 → 2027-08-11 (+1d) |  |  |
| RHD4CZ6RA01CCTV5100 | Installation for Control room Equipment for Security Network - (ROUND-01)-Z6-RA01-CCTV | 2027-07-31 → 2027-08-01 (+1d) | 2027-08-08 → 2027-08-09 (+1d) |  | -150d → -151d |
| RHD4CZ6RA01CCTV5200 | Installation of Access Control for Control Room for Security Network - (ROUND-01)-Z6-RA01-CCTV | 2027-08-09 → 2027-08-10 (+1d) | 2027-08-10 → 2027-08-11 (+1d) |  | -150d → -151d |
| 5611 | **RHD4-02-002-RA01-(CCTV)-CCTV Panels and Components** | 2027-07-26 → 2027-07-27 (+1d) | 2027-07-29 → 2027-07-31 (+2d) |  |  |
| RHD4CZ6RA01CCTV6100 | Installation for CCTV Panels for Security Network - (ROUND-01)-Z6-RA01-CCTV | 2027-07-26 → 2027-07-27 (+1d) | 2027-07-29 → 2027-07-31 (+2d) |  | -150d → -151d |
| 3352 | **RHD4-02-002-Z5** |  | 2028-07-08 → 2028-06-29 (-9d) |  |  |
| 3920 | **RHD4-02-002-Z5-C051** |  | 2027-11-28 → 2027-11-29 (+1d) |  |  |
| 4099 | **RHD4-02-002-Z5-C051-Road Works - RD** |  | 2027-11-28 → 2027-11-29 (+1d) |  |  |
| 4101 | **RHD4-02-002-C051-(RD)-Aggregate Base Course** | 2027-02-14 → 2026-11-11 (-95d) | 2027-02-18 → 2026-11-14 (-96d) |  |  |
| RHD4CZ5C051RD2100 | Supply, lay and compaction Aggregate base course compacted thickness 300 mmfor Roads - (RD-C-5 /1)-Z5-C051-RD | 2027-02-14 → 2026-11-11 A (-95d) | 2027-02-18 → 2026-11-14 A (-96d) | 0% → 100% | -142d → none |
| 4102 | **RHD4-02-002-C051-(RD)-Bituminous base course Two Layers, including (MC1)&(RC2)** | 2027-02-20 → 2027-02-03 (-17d) | 2027-11-01 → 2027-11-02 (+1d) |  |  |
| RHD4CZ5C051RD3100 | Supply, lay and Asphaltic base course including Prime Coat (MC1) for 1st Layer - (RD-C-5 /1)-Z5-C051-RD | 2027-02-20 → 2027-02-03 (-17d) | 2027-02-21 → 2027-02-04 (-17d) |  | -142d → -126d |
| RHD4CZ5C051RD3200 | Supply, lay and Asphaltic base course including Tack Coat (RC2) for 2nd Layer - (RD-C-5 /1)-Z5-C051-RD | 2027-10-31 → 2027-11-01 (+1d) | 2027-11-01 → 2027-11-02 (+1d) |  | -155d → -156d |
| 4104 | **RHD4-02-002-C051-(RD)-Precast Concrete Curb** | 2027-11-02 → 2027-11-03 (+1d) | 2027-11-06 → 2027-11-07 (+1d) |  |  |
| RHD4CZ5C051RD5100 | Supply and installation Precast Concrete Kerb for Roads - (RD-C-5 /1)-Z5-C051-RD | 2027-11-02 → 2027-11-03 (+1d) | 2027-11-06 → 2027-11-07 (+1d) |  | -155d → -156d |
| 4107 | **RHD4-02-002-C051-(RD)-Traffic Signage** | 2027-11-07 → 2027-11-08 (+1d) | 2027-11-13 → 2027-11-14 (+1d) |  |  |
| RHD4CZ5C051RD8100 | Installation of Traffic Signage for Road Network - (RD-C-5 /1)-Z5-C051-RD | 2027-11-07 → 2027-11-08 (+1d) | 2027-11-13 → 2027-11-14 (+1d) |  | -155d → -156d |
| 4105 | **RHD4-02-002-C051-(RD)-Precast Interlocking Block Pavers** | 2027-11-14 → 2027-11-15 (+1d) | 2027-11-20 → 2027-11-21 (+1d) |  |  |
| RHD4CZ5C051RD6100 | Interlocking block pavers for sidewalk-footpath for Side walks and Parking areas - (RD-C-5 /1)-Z5-C051-RD | 2027-11-14 → 2027-11-15 (+1d) | 2027-11-20 → 2027-11-21 (+1d) |  | -155d → -156d |
| 4103 | **RHD4-02-002-C051-(RD)-Bituminous concrete wearing course including tack coat (RC2)** | 2027-11-21 → 2027-11-22 (+1d) | 2027-11-22 → 2027-11-23 (+1d) |  |  |
| RHD4CZ5C051RD4100 | Supply, lay and compaction Asphaltic wearing course including tack Coat (RC2)for Road Network - (RD-C-5 /1)-Z5-C051-RD | 2027-11-21 → 2027-11-22 (+1d) | 2027-11-22 → 2027-11-23 (+1d) |  | -155d → -156d |
| 4106 | **RHD4-02-002-C051-(RD)-Pavement Marking** | 2027-11-23 → 2027-11-24 (+1d) | 2027-11-28 → 2027-11-29 (+1d) |  |  |
| RHD4CZ5C051RD7100 | Pavement Markings for Road Network - (RD-C-5 /1)-Z5-C051-RD | 2027-11-23 → 2027-11-24 (+1d) | 2027-11-28 → 2027-11-29 (+1d) |  | -155d → -156d |
| 3924 | **RHD4-02-002-Z5-C051-Storm Network - ST** |  | 2027-02-09 → 2027-02-10 (+1d) |  |  |
| 3942 | **RHD4-02-002-C051-(ST)-MH Works - 1500 mm diameter** |  | 2027-02-04 → 2027-02-06 (+2d) |  |  |
| RHD4CZ5C051ST3301 | MH Ring and C.Slab works and Backfilling works for MH 1500 mm - (RD-C-5 /1)-Z5-C051-ST |  | 2027-01-27 → 2027-01-28 (+1d) |  | -172d → -173d |
| RHD4CZ5C051ST3401 | Steel Cover for MH 1500 mm - (RD-C-5 /1)-Z5-C051-ST | 2027-01-28 → 2027-01-30 (+2d) | 2027-01-30 → 2027-01-31 (+1d) |  | -172d → -173d |
| RHD4CZ5C051ST3501 | Finishing, Benching, Testing works for MH 1500 mm - (RD-C-5 /1)-Z5-C051-ST | 2027-02-03 → 2027-02-04 (+1d) | 2027-02-04 → 2027-02-06 (+2d) |  | -174d → -175d |
| 3941 | **RHD4-02-002-C051-(ST)-MH Works - 1200 mm diameter** |  | 2027-02-09 → 2027-02-10 (+1d) |  |  |
| RHD4CZ5C051ST3300 | MH Ring and C.Slab works and Backfilling works for MH 1200 mm - (RD-C-5 /1)-Z5-C051-ST |  | 2027-01-30 → 2027-01-31 (+1d) |  | -172d → -173d |
| RHD4CZ5C051ST3400 | Steel Cover for MH 1200 mm - (RD-C-5 /1)-Z5-C051-ST | 2027-02-03 → 2027-02-04 (+1d) | 2027-02-06 → 2027-02-07 (+1d) |  | -175d → -176d |
| RHD4CZ5C051ST3500 | Finishing, Benching, Testing works for MH 1200 mm - (RD-C-5 /1)-Z5-C051-ST | 2027-02-07 → 2027-02-08 (+1d) | 2027-02-09 → 2027-02-10 (+1d) |  | -175d → -176d |
| 3927 | **RHD4-02-002-C051-(ST)-GRP Pipes - 600 mm diameter** |  | 2027-02-02 → 2027-02-03 (+1d) |  |  |
| RHD4CZ5C051ST1402 | Primary Test for GRP Pipe Line 600 mm - (RD-C-5 /1)-Z5-C051-ST |  | 2027-02-02 → 2027-02-03 (+1d) |  | -175d → -176d |
| 2994 | **RHD4-02-002-C051-(ST)-UPVC Pipes - 400 mm diameter** |  | 2027-01-27 → 2027-01-28 (+1d) |  |  |
| RHD4CZ5C051ST2401 | Primary Test for UPVC Pipe Line 400 mm - (RD-C-5 /1)-Z5-C051-ST | 2027-01-26 → 2027-01-27 (+1d) | 2027-01-27 → 2027-01-28 (+1d) |  | -172d → -173d |
| 3939 | **RHD4-02-002-C051-(ST)-UPVC Pipes - 300 mm diameter** |  | 2027-01-30 → 2027-01-31 (+1d) |  |  |
| RHD4CZ5C051ST2400 | Primary Test for UPVC Pipe Line 300 mm - (RD-C-5 /1)-Z5-C051-ST | 2027-01-28 → 2027-01-30 (+2d) | 2027-01-30 → 2027-01-31 (+1d) |  | -172d → -173d |
| 3947 | **RHD4-02-002-C051-(ST)-Concrete Encasement** | 2027-01-28 → 2027-01-30 (+2d) | 2027-01-30 → 2027-01-31 (+1d) |  |  |
| RHD4CZ5C051ST6100 | Pipe Encasement for Storm Pipelines - (RD-C-5 /1)-Z5-C051-ST | 2027-01-28 → 2027-01-30 (+2d) | 2027-01-30 → 2027-01-31 (+1d) |  | -172d → -173d |
| 3948 | **RHD4-02-002-Z5-C051-Catch Basin - ST** |  | 2027-02-16 → 2027-02-17 (+1d) |  |  |
| 3949 | **RHD4-02-002-C051-(ST)-Single Catch Basin Works** |  | 2027-02-16 → 2027-02-17 (+1d) |  |  |
| RHD4CZ5C051ST7400 | Steel Cover for Single Catch Basin - (RD-C-5 /1)-Z5-C051-ST | 2027-01-26 → 2027-01-27 (+1d) | 2027-01-28 → 2027-01-30 (+2d) |  | -165d → -166d |
| RHD4CZ5C051ST7500 | Finishing and Insulation works for Single Catch Basin - (RD-C-5 /1)-Z5-C051-ST | 2027-02-10 → 2027-02-11 (+1d) | 2027-02-16 → 2027-02-17 (+1d) |  | -175d → -176d |
| 6409 | **RHD4-02-002-C051-(ST)-Double Catch Basin Works** |  | 2027-01-30 → 2027-01-31 (+1d) |  |  |
| RHD4CZ5C051ST8400 | Steel Cover for Double Catch Basin - (RD-C-5 /1)-Z5-C051-ST | 2027-01-26 → 2027-01-27 (+1d) | 2027-01-27 → 2027-01-28 (+1d) |  | -180d → -181d |
| RHD4CZ5C051ST8500 | Finishing and Insulation works for Double Catch Basin - (RD-C-5 /1)-Z5-C051-ST | 2027-01-28 → 2027-01-30 (+2d) | 2027-01-30 → 2027-01-31 (+1d) |  | -180d → -181d |
| 3973 | **RHD4-02-002-Z5-C051-Sewage Network - SW** |  | 2027-03-03 → 2027-03-04 (+1d) |  |  |
| 957 | **RHD4-02-002-C051-(SW)-MH Works - 1200 mm diameter with Back drop** |  | 2027-02-16 → 2027-02-17 (+1d) |  |  |
| RHD4CZ5C051SW3301 | MH Ring and C.Slab works and Backfilling works for MH 1200 mm - (RD-C-5 /1)-Z5-C051-SW | 2027-02-10 → 2027-02-11 (+1d) | 2027-02-11 → 2027-02-13 (+2d) |  | -156d → -157d |
| RHD4CZ5C051SW3401 | Steel Cover for MH 1200 mm - (RD-C-5 /1)-Z5-C051-SW | 2027-02-13 → 2027-02-14 (+1d) | 2027-02-14 → 2027-02-15 (+1d) |  | -156d → -157d |
| RHD4CZ5C051SW3501 | Finishing, Benching, Testing works for MH 1200 mm - (RD-C-5 /1)-Z5-C051-SW | 2027-02-15 → 2027-02-16 (+1d) | 2027-02-16 → 2027-02-17 (+1d) |  | -156d → -157d |
| 3794 | **RHD4-02-002-C051-(SW)-MH Works - 1200 mm diameter** |  | 2027-03-03 → 2027-03-04 (+1d) |  |  |
| RHD4CZ5C051SW3300 | MH Ring and C.Slab works and Backfilling works for MH 1200 mm - (RD-C-5 /1)-Z5-C051-SW | 2027-02-10 → 2027-02-11 (+1d) | 2027-02-17 → 2027-02-18 (+1d) |  | -154d → -153d |
| RHD4CZ5C051SW3400 | Steel Cover for MH 1200 mm - (RD-C-5 /1)-Z5-C051-SW | 2027-02-18 → 2027-02-20 (+2d) | 2027-02-23 → 2027-02-24 (+1d) |  | -154d → -153d |
| RHD4CZ5C051SW3500 | Finishing, Benching, Testing works for MH 1200 mm - (RD-C-5 /1)-Z5-C051-SW | 2027-02-24 → 2027-02-25 (+1d) | 2027-03-03 → 2027-03-04 (+1d) |  | -154d → -153d |
| 4010 | **RHD4-02-002-Z5-C051-Potable Network - PT** |  | 2027-03-17 → 2027-03-15 (-2d) |  |  |
| 4011 | **RHD4-02-002-C051-(PT)-HDPE Pipes - 110 mm diameter** |  | 2027-03-08 → 2027-03-13 (+5d) |  |  |
| RHD4CZ5C051PT1400 | Primary Test for HDPE Pipline 110 mm - (RD-C-5 /1)-Z5-C051-PT | 2027-03-04 → 2027-03-06 (+2d) | 2027-03-06 → 2027-03-07 (+1d) |  | -154d → -153d |
| RHD4CZ5C051PT1500 | Backfilling and warning tape works for HDPE Pipline 110 mm - (RD-C-5 /1)-Z5-C051-PT | 2027-03-07 → 2027-03-08 (+1d) | 2027-03-08 → 2027-03-13 (+5d) |  | -154d → -153d |
| 4012 | **RHD4-02-002-C051-(PT)-HDPE Pipes - 160 mm diameter** |  | 2027-03-15 → 2027-03-13 (-2d) |  |  |
| RHD4CZ5C051PT1101 | Excavation works for HDPE Pipline 160 mm - (RD-C-5 /1)-Z5-C051-PT |  | 2027-02-11 → 2026-09-12 A (-152d) | 20% → 100% | -134d → none |
| RHD4CZ5C051PT1201 | Bedding works for HDPE Pipline 160 mm - (RD-C-5 /1)-Z5-C051-PT |  | 2027-02-14 → 2026-09-14 A (-153d) | 20% → 100% | -116d → none |
| RHD4CZ5C051PT1301 | Installing for HDPE Pipline 160 mm - (RD-C-5 /1)-Z5-C051-PT |  | 2027-02-17 → 2026-09-17 A (-153d) | 20% → 100% | -116d → none |
| RHD4CZ5C051PT1501 | Backfilling and warning tape works for HDPE Pipline 160 mm - (RD-C-5 /1)-Z5-C051-PT | 2027-03-13 → 2026-11-07 A (-126d) | 2027-03-15 → 2026-11-08 A (-127d) | 0% → 100% | -129d → none |
| RHD4CZ5C051PT1401 | Primary Test for HDPE Pipline 160 mm - (RD-C-5 /1)-Z5-C051-PT | 2027-03-07 → 2027-03-08 (+1d) | 2027-03-08 → 2027-03-13 (+5d) |  | -129d → -127d |
| 4016 | **RHD4-02-002-C051-(PT)-Gate Valves (Direct Buried)** | 2027-03-04 → 2027-03-06 (+2d) | 2027-03-17 → 2027-03-15 (-2d) |  |  |
| RHD4CZ5C051PT3100 | Installation for Direct Buried Gate Valves - (RD-C-5 /1)-Z5-C051-PT | 2027-03-04 → 2027-03-06 (+2d) | 2027-03-06 → 2027-03-07 (+1d) |  | -129d → -127d |
| RHD4CZ5C051PT3200 | Stem and Service box for Direct Buried Gate Valves - (RD-C-5 /1)-Z5-C051-PT | 2027-03-16 → 2027-03-14 (-2d) | 2027-03-17 → 2027-03-15 (-2d) |  | -129d → -127d |

| ID | Task | Start | Finish | Total float |
| --- | --- | --- | --- | --- |
| 4025 | **RHD4-02-002-Z5-C051-Irrigation Network - IRR** | 2027-03-13 → 2027-03-14 (+1d) | 2027-04-08 → 2027-04-10 (+2d) |  |
| 4026 | **RHD4-02-002-C051-(IRR)-HDPE Pipes - 160 mm diameter** | 2027-03-13 → 2027-03-14 (+1d) | 2027-04-01 → 2027-04-03 (+2d) |  |
| RHD4CZ5C051IRR1100 | Excavation works for HDPE Pipline 160 mm - (RD-C-5 /1)-Z5-C051-IRR | 2027-03-13 → 2027-03-14 (+1d) | 2027-03-16 → 2027-03-17 (+1d) | -154d → -153d |
| RHD4CZ5C051IRR1200 | Bedding works for HDPE Pipline 160 mm - (RD-C-5 /1)-Z5-C051-IRR | 2027-03-17 → 2027-03-18 (+1d) | 2027-03-21 → 2027-03-22 (+1d) | -154d → -153d |
| RHD4CZ5C051IRR1300 | Installing for HDPE Pipline 160 mm - (RD-C-5 /1)-Z5-C051-IRR | 2027-03-22 → 2027-03-23 (+1d) | 2027-03-25 → 2027-03-27 (+2d) | -154d → -153d |
| RHD4CZ5C051IRR1400 | Primary Test for HDPE Pipline 160 mm - (RD-C-5 /1)-Z5-C051-IRR | 2027-03-27 → 2027-03-28 (+1d) | 2027-03-28 → 2027-03-29 (+1d) | -154d → -153d |
| RHD4CZ5C051IRR1500 | Backfilling and warning tape works for HDPE Pipline 160 mm - (RD-C-5 /1)-Z5-C051-IRR | 2027-03-29 → 2027-03-30 (+1d) | 2027-04-01 → 2027-04-03 (+2d) | -154d → -153d |
| 4034 | **RHD4-02-002-C051-(IRR)-Gate Valves (Direct Buried)** | 2027-03-24 → 2027-03-25 (+1d) | 2027-04-04 → 2027-04-05 (+1d) |  |
| RHD4CZ5C051IRR3100 | Installation for Direct Buried Gate Valves - (RD-C-5 /1)-Z5-C051-IRR | 2027-03-24 → 2027-03-25 (+1d) | 2027-03-25 → 2027-03-27 (+2d) | -154d → -153d |
| RHD4CZ5C051IRR3200 | Stem and Service box for Direct Buried Gate Valves - (RD-C-5 /1)-Z5-C051-IRR | 2027-04-03 → 2027-04-04 (+1d) | 2027-04-04 → 2027-04-05 (+1d) | -154d → -153d |
| 4037 | **RHD4-02-002-C051-(IRR)-Wash out Chamber** | 2027-03-27 → 2027-03-28 (+1d) | 2027-04-04 → 2027-04-05 (+1d) |  |
| RHD4CZ5C051IRR2101 | Excavation and Bedding for Wash out Chamber for Irrigation Network - (RD-C-5 /1)-Z5-C051-IRR | 2027-03-27 → 2027-03-28 (+1d) | 2027-03-28 → 2027-03-29 (+1d) | -130d → -131d |
| RHD4CZ5C051IRR2201 | PC works for Wash out Chamber for Irrigation Network - (RD-C-5 /1)-Z5-C051-IRR | 2027-03-29 → 2027-03-30 (+1d) | 2027-03-30 → 2027-03-31 (+1d) | -130d → -131d |
| RHD4CZ5C051IRR2301 | Installation for Wash out Chamber for Irrigation Network - (RD-C-5 /1)-Z5-C051-IRR | 2027-03-31 → 2027-04-01 (+1d) | 2027-04-01 → 2027-04-03 (+2d) | -130d → -131d |
| RHD4CZ5C051IRR2401 | Backfilling works for Wash out Chamber for Irrigation Network - (RD-C-5 /1)-Z5-C051-IRR | 2027-04-03 → 2027-04-04 (+1d) | 2027-04-04 → 2027-04-05 (+1d) | -130d → -131d |
| 4038 | **RHD4-02-002-C051-(IRR)-Wash out Valves** | 2027-04-03 → 2027-04-04 (+1d) | 2027-04-06 → 2027-04-07 (+1d) |  |
| RHD4CZ5C051IRR3102 | Installation for Wash out Valve for Irrigation Network - (RD-C-5 /1)-Z5-C051-IRR | 2027-04-03 → 2027-04-04 (+1d) | 2027-04-04 → 2027-04-05 (+1d) | -130d → -131d |
| RHD4CZ5C051IRR3202 | Stem and Service box for Wash out Valve for Irrigation Network - (RD-C-5 /1)-Z5-C051-IRR | 2027-04-05 → 2027-04-06 (+1d) | 2027-04-06 → 2027-04-07 (+1d) | -130d → -131d |
| 4039 | **RHD4-02-002-C051-(IRR)-Air Valve Chamber** | 2027-03-27 → 2027-03-28 (+1d) | 2027-04-04 → 2027-04-05 (+1d) |  |
| RHD4CZ5C051IRR2102 | Excavation and Bedding for Valve Chamber for Irrigation Network - (RD-C-5 /1)-Z5-C051-IRR | 2027-03-27 → 2027-03-28 (+1d) | 2027-03-28 → 2027-03-29 (+1d) | -128d → -129d |
| RHD4CZ5C051IRR2202 | PC works for Valve Chamber for Irrigation Network - (RD-C-5 /1)-Z5-C051-IRR | 2027-03-29 → 2027-03-30 (+1d) | 2027-03-30 → 2027-03-31 (+1d) | -128d → -129d |
| RHD4CZ5C051IRR2302 | Installation for Valve Chamber for Irrigation Network - (RD-C-5 /1)-Z5-C051-IRR | 2027-03-31 → 2027-04-01 (+1d) | 2027-04-01 → 2027-04-03 (+2d) | -128d → -129d |
| RHD4CZ5C051IRR2402 | Backfilling works for Valve Chamber for Irrigation Network - (RD-C-5 /1)-Z5-C051-IRR | 2027-04-03 → 2027-04-04 (+1d) | 2027-04-04 → 2027-04-05 (+1d) | -128d → -129d |
| 4040 | **RHD4-02-002-C051-(IRR)-Air Valves** | 2027-04-03 → 2027-04-04 (+1d) | 2027-04-08 → 2027-04-10 (+2d) |  |
| RHD4CZ5C051IRR3103 | Installation for Air Valves for Irrigation Network - (RD-C-5 /1)-Z5-C051-IRR | 2027-04-03 → 2027-04-04 (+1d) | 2027-04-04 → 2027-04-05 (+1d) | -128d → -129d |
| RHD4CZ5C051IRR3203 | Stem and Service box for Air Valves for Irrigation Network - (RD-C-5 /1)-Z5-C051-IRR | 2027-04-07 → 2027-04-08 (+1d) | 2027-04-08 → 2027-04-10 (+2d) | -130d → -131d |
| 4041 | **RHD4-02-002-C051-(IRR)-Concrete Encasement** | 2027-03-24 → 2027-03-25 (+1d) | 2027-03-25 → 2027-03-27 (+2d) |  |
| RHD4CZ5C051IRR5100 | Pipe Encasement for Irrigation Pipelines - (RD-C-5 /1)-Z5-C051-IRR | 2027-03-24 → 2027-03-25 (+1d) | 2027-03-25 → 2027-03-27 (+2d) | -154d → -153d |
| 4059 | **RHD4-02-002-Z5-C051-Medium Voltage Network - MV** |  | 2027-07-06 → 2027-07-05 (-1d) |  |
| 4060 | **RHD4-02-002-C051-(MV)-Medium Voltage cable trench** | 2027-06-22 → 2027-06-21 (-1d) | 2027-07-04 → 2027-07-03 (-1d) |  |
| RHD4CZ5C051MV1100 | Excavation for Medium Voltage Trench - (RD-C-5 /1)-Z5-C051-MV | 2027-06-22 → 2027-06-21 (-1d) | 2027-06-23 → 2027-06-22 (-1d) | -172d → -171d |
| RHD4CZ5C051MV1200 | Trench Backfilling for Medium Voltage Network - (RD-C-5 /1)-Z5-C051-MV | 2027-07-03 → 2027-07-01 (-2d) | 2027-07-04 → 2027-07-03 (-1d) | -172d → -171d |
| 4062 | **RHD4-02-002-C051-(MV)-Medium Voltage cables 3Cx 500 mm²** | 2027-06-24 → 2027-06-23 (-1d) | 2027-07-06 → 2027-07-05 (-1d) |  |
| RHD4CZ5C051MV3100 | Installation of Medium Voltage Cables 3Cx 500 mm² - (RD-C-5 /1)-Z5-C051-MV | 2027-06-24 → 2027-06-23 (-1d) | 2027-06-29 → 2027-06-28 (-1d) | -172d → -171d |
| RHD4CZ5C051MV3200 | Joints Installation of Medium Voltage Cables 3Cx 500 mm² - (RD-C-5 /1)-Z5-C051-MV | 2027-06-30 → 2027-06-29 (-1d) | 2027-07-01 → 2027-06-30 (-1d) | -172d → -171d |
| RHD4CZ5C051MV3300 | Testing of Medium Voltage Cables 3Cx 500 mm² - (RD-C-5 /1)-Z5-C051-MV | 2027-07-05 → 2027-07-04 (-1d) | 2027-07-06 → 2027-07-05 (-1d) | -172d → -171d |
| 4066 | **RHD4-02-002-Z5-C051-Low Voltage Network - LV** |  | 2027-06-08 → 2027-06-09 (+1d) |  |
| 4068 | **RHD4-02-002-C051-(LV)-Low Voltage Drawpit** | 2027-05-04 → 2027-05-05 (+1d) | 2027-05-08 → 2027-05-09 (+1d) |  |
| RHD4CZ5C051LV5100 | Excavation of Drawpit size 900x900x1000mm for Low Voltage Network - (RD-C-5 /1)-Z5-C051-LV | 2027-05-04 → 2027-05-05 (+1d) | 2027-05-05 → 2027-05-06 (+1d) | -155d → -156d |
| RHD4CZ5C051LV5200 | Installation of Drawpit size 900x900x1000mm for Low Voltage Network - (RD-C-5 /1)-Z5-C051-LV | 2027-05-06 → 2027-05-08 (+2d) | 2027-05-08 → 2027-05-09 (+1d) | -155d → -156d |
| 4069 | **RHD4-02-002-C051-(LV)-Low Voltage cables** | 2027-05-09 → 2027-05-10 (+1d) | 2027-06-08 → 2027-06-09 (+1d) |  |
| RHD4CZ5C051LV3100 | Excavation for Low Voltage Cables for Low Voltage Network - (RD-C-5 /1)-Z5-C051-LV | 2027-05-09 → 2027-05-10 (+1d) | 2027-05-20 → 2027-05-22 (+2d) | -155d → -156d |
| RHD4CZ5C051LV3200 | Cable Laying of Low Voltage Cables for Low Voltage Network - (RD-C-5 /1)-Z5-C051-LV | 2027-05-22 → 2027-05-23 (+1d) | 2027-05-27 → 2027-05-29 (+2d) | -155d → -156d |
| RHD4CZ5C051LV3300 | Warning tape and Backfill for Low Voltage Cables for Low Voltage Network - (RD-C-5 /1)-Z5-C051-LV | 2027-05-29 → 2027-05-30 (+1d) | 2027-06-03 → 2027-06-05 (+2d) | -155d → -156d |
| RHD4CZ5C051LV3400 | Testing of Low Voltage Cables for Low Voltage Network - (RD-C-5 /1)-Z5-C051-LV | 2027-06-05 → 2027-06-06 (+1d) | 2027-06-08 → 2027-06-09 (+1d) | -155d → -156d |
| 4072 | **RHD4-02-002-Z5-C051-Street Lighting Network - SL** | 2027-06-09 → 2027-06-10 (+1d) | 2027-07-08 → 2027-07-10 (+2d) |  |
| 4075 | **RHD4-02-002-C051-(SL)-Street Lighting cables** | 2027-06-09 → 2027-06-10 (+1d) | 2027-06-22 → 2027-06-23 (+1d) |  |
| RHD4CZ5C051SL3100 | Excavation for Street Lighting Cables for Street Lighting Network - (RD-C-5 /1)-Z5-C051-SL | 2027-06-09 → 2027-06-10 (+1d) | 2027-06-13 → 2027-06-14 (+1d) | -155d → -156d |
| RHD4CZ5C051SL3200 | Cable Laying of Street Lighting Cables for Street Lighting Network - (RD-C-5 /1)-Z5-C051-SL | 2027-06-14 → 2027-06-15 (+1d) | 2027-06-16 → 2027-06-17 (+1d) | -155d → -156d |
| RHD4CZ5C051SL3300 | Warning tape and Backfill for Street Lighting Cables for Street Lighting Network - (RD-C-5 /1)-Z5-C051-SL | 2027-06-17 → 2027-06-19 (+2d) | 2027-06-20 → 2027-06-21 (+1d) | -155d → -156d |
| RHD4CZ5C051SL3400 | Testing of Street Lighting Cables for Street Lighting Network - (RD-C-5 /1)-Z5-C051-SL | 2027-06-21 → 2027-06-22 (+1d) | 2027-06-22 → 2027-06-23 (+1d) | -155d → -156d |
| 4076 | **RHD4-02-002-C051-(SL)-Street Lighting Poles** | 2027-06-23 → 2027-06-24 (+1d) | 2027-07-08 → 2027-07-10 (+2d) |  |
| RHD4CZ5C051SL1100 | Excavation for RC Base for Lighting Poles for Street Lighting Network - (RD-C-5 /1)-Z5-C051-SL | 2027-06-23 → 2027-06-24 (+1d) | 2027-06-24 → 2027-06-26 (+2d) | -155d → -156d |
| RHD4CZ5C051SL1200 | Installation for RC Base for Lighting Poles for Street Lighting Network - (RD-C-5 /1)-Z5-C051-SL | 2027-06-26 → 2027-06-27 (+1d) | 2027-06-27 → 2027-06-28 (+1d) | -155d → -156d |
| RHD4CZ5C051SL1300 | Backfill for RC Base for Lighting Poles for Street Lighting Network - (RD-C-5 /1)-Z5-C051-SL | 2027-06-28 → 2027-06-29 (+1d) | 2027-06-29 → 2027-06-30 (+1d) | -155d → -156d |
| RHD4CZ5C051SL1400 | Installation for Lighting Poles for Street Lighting Network - (RD-C-5 /1)-Z5-C051-SL | 2027-06-30 → 2027-07-01 (+1d) | 2027-07-03 → 2027-07-04 (+1d) | -155d → -156d |
| RHD4CZ5C051SL1500 | Luminaire Installation for Lighting Poles for Street Lighting Network - (RD-C-5 /1)-Z5-C051-SL | 2027-07-06 → 2027-07-07 (+1d) | 2027-07-08 → 2027-07-10 (+2d) | -155d → -156d |
| 4078 | **RHD4-02-002-C051-(SL)-Street Lighting Earthing System** | 2027-07-04 → 2027-07-05 (+1d) | 2027-07-05 → 2027-07-06 (+1d) |  |
| RHD4CZ5C051SL6100 | Installation of Earthing for Lighting Poles and Fedder Pillers for Street Lighting Network - (RD-C-5 /1)-Z5-C051-SL | 2027-07-04 → 2027-07-05 (+1d) | 2027-07-05 → 2027-07-06 (+1d) | -155d → -156d |
| 4084 | **RHD4-02-002-Z5-C051-Telecommunications Network - TC** |  | 2027-08-18 → 2027-08-19 (+1d) |  |
| 4085 | **RHD4-02-002-C051-(TC)-Telecommunications Ducts** | 2027-07-10 → 2027-07-11 (+1d) | 2027-08-09 → 2027-08-10 (+1d) |  |
| RHD4CZ5C051TC2100 | Excavation of HDPE Ducts for Telecom Network - (RD-C-5 /1)-Z5-C051-TC | 2027-07-10 → 2027-07-11 (+1d) | 2027-07-18 → 2027-07-19 (+1d) | -155d → -156d |
| RHD4CZ5C051TC2200 | Installation of HDPE Ducts for Telecom Network - (RD-C-5 /1)-Z5-C051-TC | 2027-07-19 → 2027-07-20 (+1d) | 2027-07-31 → 2027-08-01 (+1d) | -155d → -156d |
| RHD4CZ5C051TC2400 | Backfilling of HDPE Ducts for Telecom Network - (RD-C-5 /1)-Z5-C051-TC | 2027-08-01 → 2027-08-02 (+1d) | 2027-08-09 → 2027-08-10 (+1d) | -155d → -156d |
| 4086 | **RHD4-02-002-C051-(TC)-Telecommunications Manholes** | 2027-08-10 → 2027-08-11 (+1d) | 2027-08-18 → 2027-08-19 (+1d) |  |
| RHD4CZ5C051TC5100 | Excavation for Manholes for Telecom Network - (RD-C-5 /1)-Z5-C051-TC | 2027-08-10 → 2027-08-11 (+1d) | 2027-08-14 → 2027-08-15 (+1d) | -155d → -156d |
| RHD4CZ5C051TC5200 | Installation of Manholes for Telecom Network - (RD-C-5 /1)-Z5-C051-TC | 2027-08-15 → 2027-08-16 (+1d) | 2027-08-18 → 2027-08-19 (+1d) | -155d → -156d |
| 4088 | **RHD4-02-002-Z5-C051-Information and Communication Technologies - ICT** |  | 2027-09-15 → 2027-09-16 (+1d) |  |
| 4089 | **RHD4-02-002-C051-(ICT)-Information and Communication Technologies Ducts** | 2027-08-19 → 2027-08-21 (+2d) | 2027-09-15 → 2027-09-16 (+1d) |  |
| RHD4CZ5C051ICT2100 | Excavation of HDPE Ducts for ICT Network - (RD-C-5 /1)-Z5-C051-ICT | 2027-08-19 → 2027-08-21 (+2d) | 2027-08-26 → 2027-08-28 (+2d) | -155d → -156d |

| ID | Task | Start | Finish | Complete | Total float |
| --- | --- | --- | --- | --- | --- |
| RHD4CZ5C051ICT2200 | Installation of HDPE Ducts for ICT Network - (RD-C-5 /1)-Z5-C051-ICT | 2027-08-28 → 2027-08-29 (+1d) | 2027-09-07 → 2027-09-08 (+1d) |  | -155d → -156d |
| RHD4CZ5C051ICT2400 | Backfilling of HDPE Ducts for ICT Network - (RD-C-5 /1)-Z5-C051-ICT | 2027-09-08 → 2027-09-09 (+1d) | 2027-09-15 → 2027-09-16 (+1d) |  | -155d → -156d |
| 4090 | **RHD4-02-002-C051-(ICT)-Information and Communication Technologies Manholes** | 2027-08-28 → 2027-08-29 (+1d) | 2027-09-02 → 2027-09-04 (+2d) |  |  |
| RHD4CZ5C051ICT5100 | Excavation for Manholes for ICT Network - (RD-C-5 /1)-Z5-C051-ICT | 2027-08-28 → 2027-08-29 (+1d) | 2027-08-30 → 2027-08-31 (+1d) |  | -144d → -145d |
| RHD4CZ5C051ICT5200 | Installation of Manholes for ICT Network - (RD-C-5 /1)-Z5-C051-ICT | 2027-08-31 → 2027-09-01 (+1d) | 2027-09-02 → 2027-09-04 (+2d) |  | -144d → -145d |
| 4092 | **RHD4-02-002-Z5-C051-Security Network - CCTV** | 2027-09-16 → 2027-09-18 (+2d) | 2027-10-30 → 2027-10-31 (+1d) |  |  |
| 4093 | **RHD4-02-002-C051-(CCTV)-Civil Works** | 2027-09-16 → 2027-09-18 (+2d) | 2027-09-28 → 2027-09-29 (+1d) |  |  |
| RHD4CZ5C051CCTV2100 | Civil Works for Security Network - (RD-C-5 /1)-Z5-C051-CCTV | 2027-09-16 → 2027-09-18 (+2d) | 2027-09-28 → 2027-09-29 (+1d) |  | -155d → -156d |
| 4851 | **RHD4-02-002-A015-(CCTV)-CCTV Poles** | 2027-09-29 → 2027-09-30 (+1d) | 2027-10-10 → 2027-10-11 (+1d) |  |  |
| RHD4CZ5C051CCTV1100 | Excavation for RC Base for CCTV Poles for Security Network - (RD-C-5 /1)-Z5-C051-CCTV | 2027-09-29 → 2027-09-30 (+1d) | 2027-09-30 → 2027-10-02 (+2d) |  | -155d → -156d |
| RHD4CZ5C051CCTV1200 | Installation for RC Base for CCTV Poles for Security Network - (RD-C-5 /1)-Z5-C051-CCTV | 2027-10-02 → 2027-10-03 (+1d) | 2027-10-03 → 2027-10-04 (+1d) |  | -155d → -156d |
| RHD4CZ5C051CCTV1300 | Backfill for RC Base for CCTV Poles for Security Network - (RD-C-5 /1)-Z5-C051-CCTV | 2027-10-04 → 2027-10-05 (+1d) | 2027-10-05 → 2027-10-06 (+1d) |  | -155d → -156d |
| RHD4CZ5C051CCTV1400 | Installation for CCTV Poles for Security Network - (RD-C-5 /1)-Z5-C051-CCTV | 2027-10-06 → 2027-10-07 (+1d) | 2027-10-07 → 2027-10-09 (+2d) |  | -155d → -156d |
| RHD4CZ5C051CCTV1500 | Protection post Installation for CCTV Poles for Security Network - (RD-C-5 /1)-Z5-C051-CCTV | 2027-10-09 → 2027-10-10 (+1d) | 2027-10-10 → 2027-10-11 (+1d) |  | -153d → -154d |
| 4852 | **RHD4-02-002-A015-(CCTV)-Camera** | 2027-10-11 → 2027-10-12 (+1d) | 2027-10-12 → 2027-10-13 (+1d) |  |  |
| RHD4CZ5C051CCTV3100 | Installation for Cameras for Security Network - (RD-C-5 /1)-Z5-C051-CCTV | 2027-10-11 → 2027-10-12 (+1d) | 2027-10-12 → 2027-10-13 (+1d) |  | -155d → -156d |
| 4853 | **RHD4-02-002-A015-(CCTV)-Power and Infrastructure** | 2027-10-09 → 2027-10-10 (+1d) | 2027-10-12 → 2027-10-13 (+1d) |  |  |
| RHD4CZ5C051CCTV4100 | Installation of Power outlet, UPS and midspan for PTZ Camerafor Cameras for Security Network - (RD-C-5 /1)-Z5-C051-CCTV | 2027-10-09 → 2027-10-10 (+1d) | 2027-10-10 → 2027-10-11 (+1d) |  | -155d → -156d |
| RHD4CZ5C051CCTV4200 | Short Range Wireless PoP wireless Bridgefor CCTV Poles for Security Network - (RD-L-16)-Z5-L016-CCTV | 2027-10-11 → 2027-10-12 (+1d) | 2027-10-12 → 2027-10-13 (+1d) |  | -155d → -156d |
| 4855 | **RHD4-02-002-A015-(CCTV)-CCTV Panels and Components** | 2027-10-13 → 2027-10-14 (+1d) | 2027-10-30 → 2027-10-31 (+1d) |  |  |
| RHD4CZ5C051CCTV6100 | Installation for CCTV Panels for Security Network - (RD-C-5 /1)-Z5-C051-CCTV | 2027-10-13 → 2027-10-14 (+1d) | 2027-10-30 → 2027-10-31 (+1d) |  | -155d → -156d |
| 4109 | **RHD4-02-002-Z5-RA07** |  | 2027-12-09 → 2027-12-11 (+2d) |  |  |
| 4288 | **RHD4-02-002-Z5-RA07-Road Works - RD** |  | 2027-12-09 → 2027-12-11 (+2d) |  |  |
| 4290 | **RHD4-02-002-RA07-(RD)-Aggregate Base Course** | 2027-02-08 → 2027-02-15 (+7d) | 2027-02-14 → 2027-02-21 (+7d) |  |  |
| RHD4CZ5RA07RD2100 | Supply, lay and compaction Aggregate base course compacted thickness 300 mmfor Roads - (ROUND-07)-Z5-RA07-RD | 2027-02-08 → 2027-02-15 (+7d) | 2027-02-14 → 2027-02-21 (+7d) |  | -159d → -165d |
| 4291 | **RHD4-02-002-RA07-(RD)-Bituminous base course Two Layers, including (MC1)&(RC2)** | 2027-02-15 → 2027-02-23 (+8d) | 2027-10-07 → 2027-10-06 (-1d) |  |  |
| RHD4CZ5RA07RD3100 | Supply, lay and Asphaltic base course including Prime Coat (MC1) for 1st Layer - (ROUND-07)-Z5-RA07-RD | 2027-02-15 → 2027-02-23 (+8d) | 2027-02-17 → 2027-02-25 (+8d) |  | -159d → -165d |
| RHD4CZ5RA07RD3200 | Supply, lay and Asphaltic base course including Tack Coat (RC2) for 2nd Layer - (ROUND-07)-Z5-RA07-RD | 2027-10-05 → 2027-10-04 (-1d) | 2027-10-07 → 2027-10-06 (-1d) |  | -171d → -170d |
| 4293 | **RHD4-02-002-RA07-(RD)-Precast Concrete Curb** | 2027-10-09 → 2027-10-07 (-2d) | 2027-10-13 → 2027-10-12 (-1d) |  |  |
| RHD4CZ5RA07RD5100 | Supply and installation Precast Concrete Kerb for Roads - (ROUND-07)-Z5-RA07-RD | 2027-10-09 → 2027-10-07 (-2d) | 2027-10-13 → 2027-10-12 (-1d) |  | -171d → -170d |
| 4296 | **RHD4-02-002-RA07-(RD)-Traffic Signage** | 2027-10-14 → 2027-10-13 (-1d) | 2027-10-20 → 2027-10-19 (-1d) |  |  |
| RHD4CZ5RA07RD8100 | Installation of Traffic Signage for Road Network - (ROUND-07)-Z5-RA07-RD | 2027-10-14 → 2027-10-13 (-1d) | 2027-10-20 → 2027-10-19 (-1d) |  | -171d → -170d |
| 4292 | **RHD4-02-002-RA07-(RD)-Bituminous concrete wearing course including tack coat (RC2)** | 2027-10-14 → 2027-10-13 (-1d) | 2027-10-16 → 2027-10-14 (-2d) |  |  |
| RHD4CZ5RA07RD4100 | Supply, lay and compaction Asphaltic wearing course including tack Coat (RC2)for Road Network - (ROUND-07)-Z5-RA07-RD | 2027-10-14 → 2027-10-13 (-1d) | 2027-10-16 → 2027-10-14 (-2d) |  | -167d → -166d |
| 4295 | **RHD4-02-002-RA07-(RD)-Pavement Marking** | 2027-10-21 → 2027-10-20 (-1d) | 2027-12-09 → 2027-12-11 (+2d) |  |  |
| RHD4CZ5RA07RD7100 | Pavement Markings for Road Network - (ROUND-07)-Z5-RA07-RD | 2027-10-21 → 2027-10-20 (-1d) | 2027-10-25 → 2027-10-24 (-1d) |  | -171d → -170d |
| RHD4CZ5RA07RD9200 | Installation for Wheel Stopper for Road Network - (ROUND-07)-Z5-RA07-RD | 2027-11-29 → 2027-11-30 (+1d) | 2027-12-09 → 2027-12-11 (+2d) |  | -155d → -156d |
| 4162 | **RHD4-02-002-Z5-RA07-Sewage Network - SW** |  | 2027-02-24 → 2027-03-03 (+7d) |  |  |
| 4172 | **RHD4-02-002-RA07-(SW)-MH Works - 1200 mm diameter** |  | 2027-02-24 → 2027-03-03 (+7d) |  |  |
| RHD4CZ5RA07SW3100 | Excavation and PC Blinding works for MH 1200 mm - (ROUND-07)-Z5-RA07-SW |  | 2027-02-07 → 2027-02-14 (+7d) |  | -162d → -168d |
| RHD4CZ5RA07SW3200 | Installation of Base for MH 1200 mm - (ROUND-07)-Z5-RA07-SW |  | 2027-02-09 → 2027-02-16 (+7d) |  | -162d → -168d |
| RHD4CZ5RA07SW3300 | MH Ring and C.Slab works and Backfilling works for MH 1200 mm - (ROUND-07)-Z5-RA07-SW | 2027-02-10 → 2027-02-17 (+7d) | 2027-02-15 → 2027-02-23 (+8d) |  | -162d → -168d |
| RHD4CZ5RA07SW3400 | Steel Cover for MH 1200 mm - (ROUND-07)-Z5-RA07-SW | 2027-02-16 → 2027-02-24 (+8d) | 2027-02-17 → 2027-02-25 (+8d) |  | -162d → -168d |
| RHD4CZ5RA07SW3500 | Finishing, Benching, Testing works for MH 1200 mm - (ROUND-07)-Z5-RA07-SW | 2027-02-18 → 2027-02-27 (+9d) | 2027-02-24 → 2027-03-03 (+7d) |  | -162d → -168d |
| 4168 | **RHD4-02-002-RA07-(SW)-UPVC Pipes - 200 mm diameter** |  | 2027-02-20 → 2027-02-28 (+8d) |  |  |
| RHD4CZ5RA07SW2500 | Backfilling and warning tape works for UPVC Pipe Line 200 mm - (ROUND-07)-Z5-RA07-SW |  | 2027-02-20 → 2027-02-28 (+8d) |  | -159d → -165d |
| RHD4CZ5RA07SW2400 | Primary Test for UPVC Pipe Line 200 mm - (ROUND-07)-Z5-RA07-SW | 2027-02-16 → 2027-02-24 (+8d) | 2027-02-17 → 2027-02-25 (+8d) |  | -159d → -165d |
| 4199 | **RHD4-02-002-Z5-RA07-Potable Network - PT** |  | 2027-04-29 → 2027-04-21 (-8d) |  |  |
| 4201 | **RHD4-02-002-RA07-(PT)-HDPE Pipes - 160 mm diameter** |  | 2027-04-15 → 2027-04-07 (-8d) |  |  |
| RHD4CZ5RA07PT1101 | Excavation works for HDPE Pipline 160 mm - (ROUND-07)-Z5-RA07-PT |  | 2027-04-06 → 2026-10-31 A (-157d) | 92% → 100% | -154d → none |
| RHD4CZ5RA07PT1201 | Bedding works for HDPE Pipline 160 mm - (ROUND-07)-Z5-RA07-PT |  | 2027-04-08 → 2026-11-08 A (-151d) | 92% → 100% | -154d → none |
| RHD4CZ5RA07PT1301 | Installing for HDPE Pipline 160 mm - (ROUND-07)-Z5-RA07-PT |  | 2027-04-11 → 2026-11-09 A (-153d) | 92% → 100% | -154d → none |
| RHD4CZ5RA07PT1501 | Backfilling and warning tape works for HDPE Pipline 160 mm - (ROUND-07)-Z5-RA07-PT | 2027-04-14 → 2026-11-07 A (-158d) | 2027-04-15 → 2026-11-10 A (-156d) | 0% → 100% | -154d → none |
| RHD4CZ5RA07PT1401 | Primary Test for HDPE Pipline 160 mm - (ROUND-07)-Z5-RA07-PT | 2027-04-12 → 2027-04-06 (-6d) | 2027-04-13 → 2027-04-07 (-6d) |  | -154d → -147d |
| 1751 | **RHD4-02-002-RA07-(PT)-Air Valve Chambers** | 2027-04-19 → 2027-04-11 (-8d) | 2027-04-27 → 2027-04-19 (-8d) |  |  |
| RHD4CZ5RA07PT2102 | Excavation and Bedding for Air Valve Chambers for Potable Water Network - (ROUND-07)-Z5-RA07-PT | 2027-04-19 → 2027-04-11 (-8d) | 2027-04-20 → 2027-04-12 (-8d) |  | -154d → -147d |
| RHD4CZ5RA07PT2202 | PC works for Air Valve Chambers for Potable Water Network - (ROUND-07)-Z5-RA07-PT | 2027-04-21 → 2027-04-13 (-8d) | 2027-04-22 → 2027-04-14 (-8d) |  | -154d → -147d |
| RHD4CZ5RA07PT2302 | Installation for Air Valve Chambers for Potable Water Network - (ROUND-07)-Z5-RA07-PT | 2027-04-24 → 2027-04-15 (-9d) | 2027-04-25 → 2027-04-17 (-8d) |  | -154d → -147d |
| RHD4CZ5RA07PT2402 | Backfilling works for Air Valve Chambers for Potable Water Network - (ROUND-07)-Z5-RA07-PT | 2027-04-26 → 2027-04-18 (-8d) | 2027-04-27 → 2027-04-19 (-8d) |  | -154d → -147d |
| 2888 | **RHD4-02-002-RA071-(PT)-Fire Hydrant** | 2027-04-19 → 2027-04-11 (-8d) | 2027-04-29 → 2027-04-21 (-8d) |  |  |
| RHD4CZ5RA07PT4100 | Excavation and Bedding and Pipe Installation for Fire Hydrant - (ROUND-07)-Z5-RA07-PT | 2027-04-19 → 2027-04-11 (-8d) | 2027-04-20 → 2027-04-12 (-8d) |  | -154d → -147d |
| RHD4CZ5RA07PT4200 | Valve Installation for Fire Hydrant - (ROUND-07)-Z5-RA07-PT | 2027-04-21 → 2027-04-13 (-8d) | 2027-04-22 → 2027-04-14 (-8d) |  | -154d → -147d |
| RHD4CZ5RA07PT4300 | Stem for Fire Hydrant - (ROUND-07)-Z5-RA07-PT | 2027-04-24 → 2027-04-15 (-9d) | 2027-04-25 → 2027-04-17 (-8d) |  | -154d → -147d |
| RHD4CZ5RA07PT4400 | Fire Installation for Fire Hydrant - (ROUND-07)-Z5-RA07-PT | 2027-04-26 → 2027-04-18 (-8d) | 2027-04-27 → 2027-04-19 (-8d) |  | -154d → -147d |
| RHD4CZ5RA07PT4500 | Protection Barriers for Fire Hydrant - (ROUND-07)-Z5-RA07-PT | 2027-04-28 → 2027-04-20 (-8d) | 2027-04-29 → 2027-04-21 (-8d) |  | -154d → -147d |
| 4208 | **RHD4-02-002-RA07-(PT)-Wash out Valve Chambers** | 2027-04-17 → 2027-04-08 (-9d) | 2027-04-27 → 2027-04-19 (-8d) |  |  |
| RHD4CZ5RA07PT2101 | Excavation and Bedding for Wash out Valve Chambers for Potable Water Network - (ROUND-07)-Z5-RA07-PT | 2027-04-17 → 2027-04-08 (-9d) | 2027-04-18 → 2027-04-10 (-8d) |  | -154d → -147d |
| RHD4CZ5RA07PT2201 | PC works for Wash out Valve Chambers for Potable Water Network - (ROUND-07)-Z5-RA07-PT | 2027-04-19 → 2027-04-11 (-8d) | 2027-04-20 → 2027-04-12 (-8d) |  | -152d → -145d |
| RHD4CZ5RA07PT2301 | Installation for Wash out Valve Chambers for Potable Water Network - (ROUND-07)-Z5-RA07-PT | 2027-04-21 → 2027-04-13 (-8d) | 2027-04-22 → 2027-04-14 (-8d) |  | -152d → -145d |
| RHD4CZ5RA07PT2401 | Backfilling works for Wash out Valve Chambers for Potable Water Network - (ROUND-07)-Z5-RA07-PT | 2027-04-26 → 2027-04-18 (-8d) | 2027-04-27 → 2027-04-19 (-8d) |  | -154d → -147d |

| ID | Task | Start | Finish | Total float |
| --- | --- | --- | --- | --- |
| 4209 | **RHD4-02-002-RA07-(PT)-Wash out Valves** | 2027-04-24 → 2027-04-15 (-9d) | 2027-04-29 → 2027-04-21 (-8d) |  |
| RHD4CZ5RA07PT3102 | Installation for Wash out Valves for Potable Water Network - (ROUND-07)-Z5-RA07-PT | 2027-04-24 → 2027-04-15 (-9d) | 2027-04-25 → 2027-04-17 (-8d) | -152d → -145d |
| RHD4CZ5RA07PT3202 | Stem and Service box for Wash out Valves for Potable Water Network - (ROUND-07)-Z5-RA07-PT | 2027-04-28 → 2027-04-20 (-8d) | 2027-04-29 → 2027-04-21 (-8d) | -154d → -147d |
| 1752 | **RHD4-02-002-RA07-(PT)-Air Valves** | 2027-04-26 → 2027-04-18 (-8d) | 2027-04-29 → 2027-04-21 (-8d) |  |
| RHD4CZ5RA07PT3103 | Installation for Air Valves for Potable Water Network - (ROUND-07)-Z5-RA07-PT | 2027-04-26 → 2027-04-18 (-8d) | 2027-04-27 → 2027-04-19 (-8d) | -154d → -147d |
| RHD4CZ5RA07PT3203 | Stem and Service box for Air Valves for Potable Water Network - (ROUND-07)-Z5-RA07-PT | 2027-04-28 → 2027-04-20 (-8d) | 2027-04-29 → 2027-04-21 (-8d) | -154d → -147d |
| 4205 | **RHD4-02-002-RA07-(PT)-Gate Valves (Direct Buried)** | 2027-04-10 → 2027-04-06 (-4d) | 2027-04-18 → 2027-04-10 (-8d) |  |
| RHD4CZ5RA07PT3100 | Installation for Direct Buried Gate Valves - (ROUND-07)-Z5-RA07-PT | 2027-04-10 → 2027-04-06 (-4d) | 2027-04-11 → 2027-04-07 (-4d) | -138d → -135d |
| RHD4CZ5RA07PT3200 | Stem and Service box for Direct Buried Gate Valves - (ROUND-07)-Z5-RA07-PT | 2027-04-17 → 2027-04-08 (-9d) | 2027-04-18 → 2027-04-10 (-8d) | -142d → -135d |
| 4214 | **RHD4-02-002-Z5-RA07-Irrigation Network - IRR** |  | 2027-04-29 → 2027-04-28 (-1d) |  |
| 4217 | **RHD4-02-002-RA07-(IRR)-HDPE Pipes - 200 mm diameter** |  | 2027-04-18 → 2027-04-17 (-1d) |  |
| RHD4CZ5RA07IRR1102 | Excavation works for HDPE Pipline 200 mm - (ROUND-07)-Z5-RA07-IRR |  | 2027-04-08 → 2027-04-07 (-1d) | -154d → -153d |
| RHD4CZ5RA07IRR1202 | Bedding works for HDPE Pipline 200 mm - (ROUND-07)-Z5-RA07-IRR |  | 2027-04-11 → 2027-04-10 (-1d) | -154d → -153d |
| RHD4CZ5RA07IRR1302 | Installing for HDPE Pipline 200 mm - (ROUND-07)-Z5-RA07-IRR |  | 2027-04-13 → 2027-04-12 (-1d) | -154d → -153d |
| RHD4CZ5RA07IRR1402 | Primary Test for HDPE Pipline 200 mm - (ROUND-07)-Z5-RA07-IRR | 2027-04-14 → 2027-04-13 (-1d) | 2027-04-15 → 2027-04-14 (-1d) | -154d → -153d |
| RHD4CZ5RA07IRR1502 | Backfilling and warning tape works for HDPE Pipline 200 mm - (ROUND-07)-Z5-RA07-IRR | 2027-04-17 → 2027-04-15 (-2d) | 2027-04-18 → 2027-04-17 (-1d) | -154d → -153d |
| 4223 | **RHD4-02-002-RA07-(IRR)-Gate Valves (Direct Buried)** | 2027-04-12 → 2027-04-11 (-1d) | 2027-04-15 → 2027-04-14 (-1d) |  |
| RHD4CZ5RA07IRR3100 | Installation for Direct Buried Gate Valves - (ROUND-07)-Z5-RA07-IRR | 2027-04-12 → 2027-04-11 (-1d) | 2027-04-13 → 2027-04-12 (-1d) | -154d → -153d |
| RHD4CZ5RA07IRR3200 | Stem and Service box for Direct Buried Gate Valves - (ROUND-07)-Z5-RA07-IRR | 2027-04-14 → 2027-04-13 (-1d) | 2027-04-15 → 2027-04-14 (-1d) | -152d → -151d |
| 4226 | **RHD4-02-002-RA07-(IRR)-Wash out Chamber** | 2027-04-19 → 2027-04-18 (-1d) | 2027-04-27 → 2027-04-26 (-1d) |  |
| RHD4CZ5RA07IRR2101 | Excavation and Bedding for Wash out Chamber for Irrigation Network - (ROUND-07)-Z5-RA07-IRR | 2027-04-19 → 2027-04-18 (-1d) | 2027-04-20 → 2027-04-19 (-1d) | -154d → -153d |
| RHD4CZ5RA07IRR2201 | PC works for Wash out Chamber for Irrigation Network - (ROUND-07)-Z5-RA07-IRR | 2027-04-21 → 2027-04-20 (-1d) | 2027-04-22 → 2027-04-21 (-1d) | -154d → -153d |
| RHD4CZ5RA07IRR2301 | Installation for Wash out Chamber for Irrigation Network - (ROUND-07)-Z5-RA07-IRR | 2027-04-24 → 2027-04-22 (-2d) | 2027-04-25 → 2027-04-24 (-1d) | -154d → -153d |
| RHD4CZ5RA07IRR2401 | Backfilling works for Wash out Chamber for Irrigation Network - (ROUND-07)-Z5-RA07-IRR | 2027-04-26 → 2027-04-25 (-1d) | 2027-04-27 → 2027-04-26 (-1d) | -154d → -153d |
| 4227 | **RHD4-02-002-RA07-(IRR)-Wash out Valves** | 2027-04-26 → 2027-04-25 (-1d) | 2027-04-29 → 2027-04-28 (-1d) |  |
| RHD4CZ5RA07IRR3102 | Installation for Wash out Valve for Irrigation Network - (ROUND-07)-Z5-RA07-IRR | 2027-04-26 → 2027-04-25 (-1d) | 2027-04-27 → 2027-04-26 (-1d) | -154d → -153d |
| RHD4CZ5RA07IRR3202 | Stem and Service box for Wash out Valve for Irrigation Network - (ROUND-07)-Z5-RA07-IRR | 2027-04-28 → 2027-04-27 (-1d) | 2027-04-29 → 2027-04-28 (-1d) | -154d → -153d |
| 6107 | **RHD4-02-002-RA07-(IRR)-HDPE Pipes - 160 mm diameter** |  | 2027-04-22 → 2027-04-21 (-1d) |  |
| RHD4CZ5RA07IRR1100 | Excavation works for HDPE Pipline 160 mm - (ROUND-07)-Z5-RA07-IRR |  | 2027-04-11 → 2027-04-10 (-1d) | -143d → -142d |
| RHD4CZ5RA07IRR1200 | Bedding works for HDPE Pipline 160 mm - (ROUND-07)-Z5-RA07-IRR |  | 2027-04-13 → 2027-04-12 (-1d) | -143d → -142d |
| RHD4CZ5RA07IRR1300 | Installing for HDPE Pipline 160 mm - (ROUND-07)-Z5-RA07-IRR |  | 2027-04-15 → 2027-04-14 (-1d) | -143d → -142d |
| RHD4CZ5RA07IRR1400 | Primary Test for HDPE Pipline 160 mm - (ROUND-07)-Z5-RA07-IRR | 2027-04-19 → 2027-04-18 (-1d) | 2027-04-20 → 2027-04-19 (-1d) | -143d → -142d |
| RHD4CZ5RA07IRR1500 | Backfilling and warning tape works for HDPE Pipline 160 mm - (ROUND-07)-Z5-RA07-IRR | 2027-04-21 → 2027-04-20 (-1d) | 2027-04-22 → 2027-04-21 (-1d) | -143d → -142d |
| 1771 | **RHD4-02-002-RA07-(IRR)-Concrete Encasement** | 2027-04-17 → 2027-04-15 (-2d) | 2027-04-18 → 2027-04-17 (-1d) |  |
| RHD4CZ5RA07IRR5100 | Pipe Encasement for Irrigation Pipelines - (ROUND-07)-Z5-RA07-IRR | 2027-04-17 → 2027-04-15 (-2d) | 2027-04-18 → 2027-04-17 (-1d) | -143d → -142d |
| 4248 | **RHD4-02-002-Z5-RA07-Medium Voltage Network - MV** | 2027-07-07 → 2027-07-06 (-1d) | 2027-07-31 → 2027-07-29 (-2d) |  |
| 4249 | **RHD4-02-002-RA07-(MV)-Medium Voltage cable trench** | 2027-07-07 → 2027-07-06 (-1d) | 2027-07-15 → 2027-07-14 (-1d) |  |
| RHD4CZ5RA07MV1100 | Excavation for Medium Voltage Trench - (ROUND-07)-Z5-RA07-MV | 2027-07-07 → 2027-07-06 (-1d) | 2027-07-10 → 2027-07-08 (-2d) | -172d → -171d |
| RHD4CZ5RA07MV1200 | Trench Backfilling for Medium Voltage Network - (ROUND-07)-Z5-RA07-MV | 2027-07-13 → 2027-07-12 (-1d) | 2027-07-15 → 2027-07-14 (-1d) | -172d → -171d |
| 4251 | **RHD4-02-002-RA07-(MV)-Medium Voltage cables 3Cx 500 mm²** | 2027-07-11 → 2027-07-10 (-1d) | 2027-07-21 → 2027-07-20 (-1d) |  |
| RHD4CZ5RA07MV3100 | Installation of Medium Voltage Cables 3Cx 500 mm² - (ROUND-07)-Z5-RA07-MV | 2027-07-11 → 2027-07-10 (-1d) | 2027-07-14 → 2027-07-13 (-1d) | -163d → -162d |
| RHD4CZ5RA07MV3200 | Joints Installation of Medium Voltage Cables 3Cx 500 mm² - (ROUND-07)-Z5-RA07-MV | 2027-07-15 → 2027-07-14 (-1d) | 2027-07-17 → 2027-07-15 (-2d) | -163d → -162d |
| RHD4CZ5RA07MV3300 | Testing of Medium Voltage Cables 3Cx 500 mm² - (ROUND-07)-Z5-RA07-MV | 2027-07-18 → 2027-07-17 (-1d) | 2027-07-19 → 2027-07-18 (-1d) | -163d → -162d |
| RHD4CZ5RA07MV3400 | Termination of Medium Voltage Cables 3Cx 500 mm² - (ROUND-07)-Z5-RA07-MV | 2027-07-20 → 2027-07-19 (-1d) | 2027-07-21 → 2027-07-20 (-1d) | -163d → -162d |
| 4252 | **RHD4-02-002-RA07-(MV)-Medium Voltage cables 3Cx 50 mm²** | 2027-07-11 → 2027-07-10 (-1d) | 2027-07-20 → 2027-07-19 (-1d) |  |
| RHD4CZ5RA07MV3101 | Installation of Medium Voltage Cables 3Cx 50 mm² - (ROUND-07)-Z5-RA07-MV | 2027-07-11 → 2027-07-10 (-1d) | 2027-07-12 → 2027-07-11 (-1d) | -172d → -171d |
| RHD4CZ5RA07MV3301 | Testing of Medium Voltage Cables 3Cx 50 mm² - (ROUND-07)-Z5-RA07-MV | 2027-07-17 → 2027-07-15 (-2d) | 2027-07-18 → 2027-07-17 (-1d) | -162d → -161d |
| RHD4CZ5RA07MV3401 | Termination of Medium Voltage Cables 3Cx 50 mm² - (ROUND-07)-Z5-RA07-MV | 2027-07-19 → 2027-07-18 (-1d) | 2027-07-20 → 2027-07-19 (-1d) | -162d → -161d |
| 4254 | **RHD4-02-002-RA07-(MV)-Unit Substations** | 2027-07-17 → 2027-07-15 (-2d) | 2027-07-31 → 2027-07-29 (-2d) |  |
| RHD4CZ5RA07MV5100 | Excavation for Unit Substations for Medium Voltage Network - (ROUND-07)-Z5-RA07-MV | 2027-07-17 → 2027-07-15 (-2d) | 2027-07-18 → 2027-07-17 (-1d) | -172d → -171d |
| RHD4CZ5RA07MV5200 | Concrete Base Placement for Unit Substations for Medium Voltage Network - (ROUND-07)-Z5-RA07-MV | 2027-07-19 → 2027-07-18 (-1d) | 2027-07-20 → 2027-07-19 (-1d) | -172d → -171d |
| RHD4CZ5RA07MV5300 | Installation for Fences and doors for Medium Voltage Network - (ROUND-07)-Z5-RA07-MV | 2027-07-21 → 2027-07-20 (-1d) | 2027-07-26 → 2027-07-25 (-1d) | -172d → -171d |
| RHD4CZ5RA07MV5400 | Installation for Unit Substations for Medium Voltage Network - (ROUND-07)-Z5-RA07-MV | 2027-07-27 → 2027-07-26 (-1d) | 2027-07-31 → 2027-07-29 (-2d) | -172d → -171d |
| 4255 | **RHD4-02-002-Z5-RA07-Low Voltage Network - LV** |  | 2027-05-13 → 2027-05-12 (-1d) |  |
| 4257 | **RHD4-02-002-RA07-(LV)-Low Voltage Drawpit** | 2027-04-24 → 2027-04-22 (-2d) | 2027-04-27 → 2027-04-26 (-1d) |  |
| RHD4CZ5RA07LV5100 | Excavation of Drawpit size 900x900x1000mm for Low Voltage Network - (ROUND-07)-Z5-RA07-LV | 2027-04-24 → 2027-04-22 (-2d) | 2027-04-25 → 2027-04-24 (-1d) | -143d → -142d |
| RHD4CZ5RA07LV5200 | Installation of Drawpit size 900x900x1000mm for Low Voltage Network - (ROUND-07)-Z5-RA07-LV | 2027-04-26 → 2027-04-25 (-1d) | 2027-04-27 → 2027-04-26 (-1d) | -143d → -142d |
| 4258 | **RHD4-02-002-RA07-(LV)-Low Voltage cables** | 2027-04-28 → 2027-04-27 (-1d) | 2027-05-06 → 2027-05-05 (-1d) |  |
| RHD4CZ5RA07LV3100 | Excavation for Low Voltage Cables for Low Voltage Network - (ROUND-07)-Z5-RA07-LV | 2027-04-28 → 2027-04-27 (-1d) | 2027-04-29 → 2027-04-28 (-1d) | -143d → -142d |
| RHD4CZ5RA07LV3200 | Cable Laying of Low Voltage Cables for Low Voltage Network - (ROUND-07)-Z5-RA07-LV | 2027-05-01 → 2027-04-29 (-2d) | 2027-05-02 → 2027-05-01 (-1d) | -143d → -142d |
| RHD4CZ5RA07LV3300 | Warning tape and Backfill for Low Voltage Cables for Low Voltage Network - (ROUND-07)-Z5-RA07-LV | 2027-05-03 → 2027-05-02 (-1d) | 2027-05-04 → 2027-05-03 (-1d) | -143d → -142d |
| RHD4CZ5RA07LV3400 | Testing of Low Voltage Cables for Low Voltage Network - (ROUND-07)-Z5-RA07-LV | 2027-05-05 → 2027-05-04 (-1d) | 2027-05-06 → 2027-05-05 (-1d) | -143d → -142d |
| 4259 | **RHD4-02-002-RA07-(LV)-Low Voltage Distribution Pillars** | 2027-05-08 → 2027-05-06 (-2d) | 2027-05-13 → 2027-05-12 (-1d) |  |
| RHD4CZ5RA07LV4100 | Leveling for Distribution Pillars for Low Voltage Network - (ROUND-07)-Z5-RA07-LV | 2027-05-08 → 2027-05-06 (-2d) | 2027-05-09 → 2027-05-08 (-1d) | -143d → -142d |
| RHD4CZ5RA07LV4200 | Lean Concrete for Distribution Pillars for Low Voltage Network - (ROUND-07)-Z5-RA07-LV | 2027-05-10 → 2027-05-09 (-1d) | 2027-05-11 → 2027-05-10 (-1d) | -143d → -142d |
| RHD4CZ5RA07LV4300 | Installation of Distribution Pillars for Low Voltage Network - (ROUND-07)-Z5-RA07-LV | 2027-05-12 → 2027-05-11 (-1d) | 2027-05-13 → 2027-05-12 (-1d) | -143d → -142d |
| 4261 | **RHD4-02-002-Z5-RA07-Street Lighting Network - SL** |  | 2027-06-16 → 2027-06-15 (-1d) |  |
| 4262 | **RHD4-02-002-RA07-(SL)-Street Lighting duct banks** |  | 2027-05-11 → 2027-05-10 (-1d) |  |
| RHD4CZ5RA07SL2100 | Excavation of Duct Banks for Street Lighting Network - (ROUND-07)-Z5-RA07-SL |  | 2027-04-27 → 2027-04-26 (-1d) | -142d → -141d |
| RHD4CZ5RA07SL2200 | Installation of Duct Banks for Street Lighting Network - (ROUND-07)-Z5-RA07-SL |  | 2027-05-03 → 2027-05-02 (-1d) | -138d → -137d |

| ID | Task | Start | Finish | Total float |
| --- | --- | --- | --- | --- |
| RHD4CZ5RA07SL2300 | Pouring of Duct Banks for Street Lighting Network - (ROUND-07)-Z5-RA07-SL |  | 2027-05-08 → 2027-05-06 (-2d) | -138d → -137d |
| RHD4CZ5RA07SL2400 | Backfilling of Duct Banks for Street Lighting Network - (ROUND-07)-Z5-RA07-SL |  | 2027-05-11 → 2027-05-10 (-1d) | -128d → -127d |
| 4263 | **RHD4-02-002-RA07-(SL)-Street Lighting Drawpit** | 2027-05-19 → 2027-05-13 (-6d) | 2027-05-23 → 2027-05-22 (-1d) |  |
| RHD4CZ5RA07SL5100 | Excavation of Drawpit size 600x600x900mm for Street Lighting Network - (ROUND-07)-Z5-RA07-SL | 2027-05-19 → 2027-05-13 (-6d) | 2027-05-20 → 2027-05-19 (-1d) | -143d → -142d |
| RHD4CZ5RA07SL5200 | Installation of Drawpit size 600x600x900mm for Street Lighting Network - (ROUND-07)-Z5-RA07-SL | 2027-05-22 → 2027-05-20 (-2d) | 2027-05-23 → 2027-05-22 (-1d) | -143d → -142d |
| 4264 | **RHD4-02-002-RA07-(SL)-Street Lighting cables** | 2027-05-24 → 2027-05-23 (-1d) | 2027-06-02 → 2027-06-01 (-1d) |  |
| RHD4CZ5RA07SL3100 | Excavation for Street Lighting Cables for Street Lighting Network - (ROUND-07)-Z5-RA07-SL | 2027-05-24 → 2027-05-23 (-1d) | 2027-05-26 → 2027-05-25 (-1d) | -143d → -142d |
| RHD4CZ5RA07SL3200 | Cable Laying of Street Lighting Cables for Street Lighting Network - (ROUND-07)-Z5-RA07-SL | 2027-05-27 → 2027-05-26 (-1d) | 2027-05-29 → 2027-05-27 (-2d) | -143d → -142d |
| RHD4CZ5RA07SL3300 | Warning tape and Backfill for Street Lighting Cables for Street Lighting Network - (ROUND-07)-Z5-RA07-SL | 2027-05-30 → 2027-05-29 (-1d) | 2027-05-31 → 2027-05-30 (-1d) | -143d → -142d |
| RHD4CZ5RA07SL3400 | Testing of Street Lighting Cables for Street Lighting Network - (ROUND-07)-Z5-RA07-SL | 2027-06-01 → 2027-05-31 (-1d) | 2027-06-02 → 2027-06-01 (-1d) | -143d → -142d |
| 4265 | **RHD4-02-002-RA07-(SL)-Street Lighting Poles** | 2027-06-03 → 2027-06-02 (-1d) | 2027-06-14 → 2027-06-13 (-1d) |  |
| RHD4CZ5RA07SL1100 | Excavation for RC Base for Lighting Poles for Street Lighting Network - (ROUND-07)-Z5-RA07-SL | 2027-06-03 → 2027-06-02 (-1d) | 2027-06-05 → 2027-06-03 (-2d) | -143d → -142d |
| RHD4CZ5RA07SL1200 | Installation for RC Base for Lighting Poles for Street Lighting Network - (ROUND-07)-Z5-RA07-SL | 2027-06-06 → 2027-06-05 (-1d) | 2027-06-07 → 2027-06-06 (-1d) | -143d → -142d |
| RHD4CZ5RA07SL1300 | Backfill for RC Base for Lighting Poles for Street Lighting Network - (ROUND-07)-Z5-RA07-SL | 2027-06-08 → 2027-06-07 (-1d) | 2027-06-09 → 2027-06-08 (-1d) | -143d → -142d |
| RHD4CZ5RA07SL1400 | Installation for Lighting Poles for Street Lighting Network - (ROUND-07)-Z5-RA07-SL | 2027-06-10 → 2027-06-09 (-1d) | 2027-06-12 → 2027-06-10 (-2d) | -143d → -142d |
| RHD4CZ5RA07SL1500 | Luminaire Installation for Lighting Poles for Street Lighting Network - (ROUND-07)-Z5-RA07-SL | 2027-06-13 → 2027-06-12 (-1d) | 2027-06-14 → 2027-06-13 (-1d) | -143d → -142d |
| 4266 | **RHD4-02-002-RA07-(SL)-Street Lighting Feeder Pillars** | 2027-06-01 → 2027-05-31 (-1d) | 2027-06-14 → 2027-06-13 (-1d) |  |
| RHD4CZ5RA07SL4100 | Leveling for Distribution Pillars for Street Lighting Network - (ROUND-07)-Z5-RA07-SL | 2027-06-01 → 2027-05-31 (-1d) | 2027-06-02 → 2027-06-01 (-1d) | -137d → -136d |
| RHD4CZ5RA07SL4200 | Lean Concrete for Distribution Pillars for Street Lighting Network - (ROUND-07)-Z5-RA07-SL | 2027-06-03 → 2027-06-02 (-1d) | 2027-06-05 → 2027-06-03 (-2d) | -137d → -136d |
| RHD4CZ5RA07SL4300 | Installation of Distribution Pillars for Street Lighting Network - (ROUND-07)-Z5-RA07-SL | 2027-06-13 → 2027-06-12 (-1d) | 2027-06-14 → 2027-06-13 (-1d) | -143d → -142d |
| 4267 | **RHD4-02-002-RA07-(SL)-Street Lighting Earthing System** | 2027-06-15 → 2027-06-14 (-1d) | 2027-06-16 → 2027-06-15 (-1d) |  |
| RHD4CZ5RA07SL6100 | Installation of Earthing for Lighting Poles and Fedder Pillers for Street Lighting Network - (ROUND-07)-Z5-RA07-SL | 2027-06-15 → 2027-06-14 (-1d) | 2027-06-16 → 2027-06-15 (-1d) | -143d → -142d |
| 4273 | **RHD4-02-002-Z5-RA07-Telecommunications Network - TC** | 2027-06-17 → 2027-06-16 (-1d) | 2027-08-04 → 2027-08-03 (-1d) |  |
| 4274 | **RHD4-02-002-RA07-(TC)-Telecommunications Ducts** | 2027-06-17 → 2027-06-16 (-1d) | 2027-06-28 → 2027-06-27 (-1d) |  |
| RHD4CZ5RA07TC2100 | Excavation of HDPE Ducts for Telecom Network - (ROUND-07)-Z5-RA07-TC | 2027-06-17 → 2027-06-16 (-1d) | 2027-06-20 → 2027-06-19 (-1d) | -143d → -142d |
| RHD4CZ5RA07TC2200 | Installation of HDPE Ducts for Telecom Network - (ROUND-07)-Z5-RA07-TC | 2027-06-21 → 2027-06-20 (-1d) | 2027-06-24 → 2027-06-23 (-1d) | -143d → -142d |
| RHD4CZ5RA07TC2400 | Backfilling of HDPE Ducts for Telecom Network - (ROUND-07)-Z5-RA07-TC | 2027-06-26 → 2027-06-24 (-2d) | 2027-06-28 → 2027-06-27 (-1d) | -143d → -142d |
| 4275 | **RHD4-02-002-RA07-(TC)-Telecommunications Manholes** | 2027-08-01 → 2027-07-31 (-1d) | 2027-08-04 → 2027-08-03 (-1d) |  |
| RHD4CZ5RA07TC5100 | Excavation for Manholes for Telecom Network - (ROUND-07)-Z5-RA07-TC | 2027-08-01 → 2027-07-31 (-1d) | 2027-08-02 → 2027-08-01 (-1d) | -171d → -170d |
| RHD4CZ5RA07TC5200 | Installation of Manholes for Telecom Network - (ROUND-07)-Z5-RA07-TC | 2027-08-03 → 2027-08-02 (-1d) | 2027-08-04 → 2027-08-03 (-1d) | -171d → -170d |
| 4277 | **RHD4-02-002-Z5-RA07-Information and Communication Technologies - ICT** | 2027-08-05 → 2027-08-04 (-1d) | 2027-08-21 → 2027-08-19 (-2d) |  |
| 4278 | **RHD4-02-002-RA07-(ICT)-Information and Communication Technologies Ducts** | 2027-08-05 → 2027-08-04 (-1d) | 2027-08-16 → 2027-08-15 (-1d) |  |
| RHD4CZ5RA07ICT2100 | Excavation of HDPE Ducts for ICT Network - (ROUND-07)-Z5-RA07-ICT | 2027-08-05 → 2027-08-04 (-1d) | 2027-08-08 → 2027-08-07 (-1d) | -171d → -170d |
| RHD4CZ5RA07ICT2200 | Installation of HDPE Ducts for ICT Network - (ROUND-07)-Z5-RA07-ICT | 2027-08-09 → 2027-08-08 (-1d) | 2027-08-12 → 2027-08-11 (-1d) | -171d → -170d |
| RHD4CZ5RA07ICT2400 | Backfilling of HDPE Ducts for ICT Network - (ROUND-07)-Z5-RA07-ICT | 2027-08-14 → 2027-08-12 (-2d) | 2027-08-16 → 2027-08-15 (-1d) | -171d → -170d |
| 4279 | **RHD4-02-002-RA07-(ICT)-Information and Communication Technologies Manholes** | 2027-08-17 → 2027-08-16 (-1d) | 2027-08-21 → 2027-08-19 (-2d) |  |
| RHD4CZ5RA07ICT5100 | Excavation for Manholes for ICT Network - (ROUND-07)-Z5-RA07-ICT | 2027-08-17 → 2027-08-16 (-1d) | 2027-08-18 → 2027-08-17 (-1d) | -171d → -170d |
| RHD4CZ5RA07ICT5200 | Installation of Manholes for ICT Network - (ROUND-07)-Z5-RA07-ICT | 2027-08-19 → 2027-08-18 (-1d) | 2027-08-21 → 2027-08-19 (-2d) | -171d → -170d |
| 4281 | **RHD4-02-002-Z5-RA07-Security Network - CCTV** | 2027-08-22 → 2027-08-21 (-1d) | 2027-10-04 → 2027-10-03 (-1d) |  |
| 4282 | **RHD4-02-002-RA07-(CCTV)-Civil Works** | 2027-08-22 → 2027-08-21 (-1d) | 2027-09-01 → 2027-08-31 (-1d) |  |
| RHD4CZ5RA07CCTV2100 | Civil Works for Security Network - (ROUND-07)-Z5-RA07-CCTV | 2027-08-22 → 2027-08-21 (-1d) | 2027-09-01 → 2027-08-31 (-1d) | -171d → -170d |
| 4283 | **RHD4-02-002-RA07-(CCTV)-CCTV Poles** | 2027-09-02 → 2027-09-01 (-1d) | 2027-09-13 → 2027-09-12 (-1d) |  |
| RHD4CZ5RA07CCTV1100 | Excavation for RC Base for CCTV Poles for Security Network - (ROUND-07)-Z5-RA07-CCTV | 2027-09-02 → 2027-09-01 (-1d) | 2027-09-04 → 2027-09-02 (-2d) | -171d → -170d |
| RHD4CZ5RA07CCTV1200 | Installation for RC Base for CCTV Poles for Security Network - (ROUND-07)-Z5-RA07-CCTV | 2027-09-05 → 2027-09-04 (-1d) | 2027-09-06 → 2027-09-05 (-1d) | -171d → -170d |
| RHD4CZ5RA07CCTV1300 | Backfill for RC Base for CCTV Poles for Security Network - (ROUND-07)-Z5-RA07-CCTV | 2027-09-07 → 2027-09-06 (-1d) | 2027-09-08 → 2027-09-07 (-1d) | -171d → -170d |
| RHD4CZ5RA07CCTV1400 | Installation for CCTV Poles for Security Network - (ROUND-07)-Z5-RA07-CCTV | 2027-09-09 → 2027-09-08 (-1d) | 2027-09-11 → 2027-09-09 (-2d) | -171d → -170d |
| RHD4CZ5RA07CCTV1500 | Protection post Installation for CCTV Poles for Security Network - (ROUND-07)-Z5-RA07-CCTV | 2027-09-12 → 2027-09-11 (-1d) | 2027-09-13 → 2027-09-12 (-1d) | -157d → -156d |
| 4284 | **RHD4-02-002-RA07-(CCTV)-Camera** | 2027-09-14 → 2027-09-13 (-1d) | 2027-09-15 → 2027-09-14 (-1d) |  |
| RHD4CZ5RA07CCTV3100 | Installation for Cameras for Security Network - (ROUND-07)-Z5-RA07-CCTV | 2027-09-14 → 2027-09-13 (-1d) | 2027-09-15 → 2027-09-14 (-1d) | -171d → -170d |
| 4285 | **RHD4-02-002-RA07-(CCTV)-Power and Infrastructure** | 2027-09-12 → 2027-09-11 (-1d) | 2027-09-15 → 2027-09-14 (-1d) |  |
| RHD4CZ5RA07CCTV4100 | Installation of Power outlet, UPS and midspan for PTZ Camerafor Cameras for Security Network - (ROUND-07)-Z5-RA07-CCTV | 2027-09-12 → 2027-09-11 (-1d) | 2027-09-13 → 2027-09-12 (-1d) | -171d → -170d |
| RHD4CZ5RA07CCTV4200 | Short Range Wireless PoP wireless Bridgefor CCTV Poles for Security Network - (ROUND-07)-Z5-RA07-CCTV | 2027-09-14 → 2027-09-13 (-1d) | 2027-09-15 → 2027-09-14 (-1d) | -171d → -170d |
| 4287 | **RHD4-02-002-RA07-(CCTV)-CCTV Panels and Components** | 2027-09-16 → 2027-09-15 (-1d) | 2027-10-04 → 2027-10-03 (-1d) |  |
| RHD4CZ5RA07CCTV6100 | Installation for CCTV Panels for Security Network - (ROUND-07)-Z5-RA07-CCTV | 2027-09-16 → 2027-09-15 (-1d) | 2027-10-04 → 2027-10-03 (-1d) | -171d → -170d |
| 4487 | **RHD4-02-002-Z5-C061** |  | 2027-10-23 → 2027-10-21 (-2d) |  |
| 4666 | **RHD4-02-002-Z5-C061-Road Works - RD** |  | 2027-10-23 → 2027-10-21 (-2d) |  |
| 4668 | **RHD4-02-002-C061-(RD)-Aggregate Base Course** | 2027-02-21 → 2027-02-25 (+4d) | 2027-02-25 → 2027-03-01 (+4d) |  |
| RHD4CZ5C061RD2100 | Supply, lay and compaction Aggregate base course compacted thickness 300 mmfor Roads - (RD-C-6 /1)-Z5-C061-RD | 2027-02-21 → 2027-02-25 (+4d) | 2027-02-25 → 2027-03-01 (+4d) | -162d → -165d |
| 4669 | **RHD4-02-002-C061-(RD)-Bituminous base course Two Layers, including (MC1)&(RC2)** | 2027-02-27 → 2027-03-02 (+3d) | 2027-10-10 → 2027-10-09 (-1d) |  |
| RHD4CZ5C061RD3100 | Supply, lay and Asphaltic base course including Prime Coat (MC1) for 1st Layer - (RD-C-6 /1)-Z5-C061-RD | 2027-02-27 → 2027-03-02 (+3d) | 2027-02-28 → 2027-03-03 (+3d) | -162d → -165d |
| RHD4CZ5C061RD3200 | Supply, lay and Asphaltic base course including Tack Coat (RC2) for 2nd Layer - (RD-C-6 /1)-Z5-C061-RD | 2027-10-09 → 2027-10-07 (-2d) | 2027-10-10 → 2027-10-09 (-1d) | -172d → -171d |
| 4671 | **RHD4-02-002-C061-(RD)-Precast Concrete Curb** | 2027-10-11 → 2027-10-10 (-1d) | 2027-10-16 → 2027-10-14 (-2d) |  |
| RHD4CZ5C061RD5100 | Supply and installation Precast Concrete Kerb for Roads - (RD-C-6 /1)-Z5-C061-RD | 2027-10-11 → 2027-10-10 (-1d) | 2027-10-16 → 2027-10-14 (-2d) | -172d → -171d |
| 4674 | **RHD4-02-002-C061-(RD)-Traffic Signage** | 2027-10-17 → 2027-10-16 (-1d) | 2027-10-23 → 2027-10-21 (-2d) |  |
| RHD4CZ5C061RD8100 | Installation of Traffic Signage for Road Network - (RD-C-6 /1)-Z5-C061-RD | 2027-10-17 → 2027-10-16 (-1d) | 2027-10-23 → 2027-10-21 (-2d) | -172d → -171d |
| 4670 | **RHD4-02-002-C061-(RD)-Bituminous concrete wearing course including tack coat (RC2)** | 2027-10-17 → 2027-10-16 (-1d) | 2027-10-18 → 2027-10-17 (-1d) |  |
| RHD4CZ5C061RD4100 | Supply, lay and compaction Asphaltic wearing course including tack Coat (RC2)for Road Network - (RD-C-6 /1)-Z5-C061-RD | 2027-10-17 → 2027-10-16 (-1d) | 2027-10-18 → 2027-10-17 (-1d) | -172d → -171d |
| 4673 | **RHD4-02-002-C061-(RD)-Pavement Marking** | 2027-10-19 → 2027-10-18 (-1d) | 2027-10-23 → 2027-10-21 (-2d) |  |
| RHD4CZ5C061RD7100 | Pavement Markings for Road Network - (RD-C-6 /1)-Z5-C061-RD | 2027-10-19 → 2027-10-18 (-1d) | 2027-10-23 → 2027-10-21 (-2d) | -172d → -171d |
| 4491 | **RHD4-02-002-Z5-C061-Storm Network - ST** |  | 2027-02-10 → 2027-02-21 (+11d) |  |

| ID | Task | Start | Finish | Complete | Total float |
| --- | --- | --- | --- | --- | --- |
| 4509 | **RHD4-02-002-C061-(ST)-MH Works - 1500 mm diameter** |  | 2027-02-03 → 2027-02-15 (+12d) |  |  |
| RHD4CZ5C061ST3101 | Excavation and PC Blinding works for MH 1500 mm - (RD-C-6 /1)-Z5-C061-ST |  | 2026-09-12 A → 2027-01-30 (+140d) | 100% → 18% | none → -188d |
| RHD4CZ5C061ST3201 | Installation of Base for MH 1500 mm - (RD-C-6 /1)-Z5-C061-ST |  | 2026-09-20 A → 2027-02-06 (+139d) | 100% → 18% | none → -186d |
| RHD4CZ5C061ST3301 | MH Ring and C.Slab works and Backfilling works for MH 1500 mm - (RD-C-6 /1)-Z5-C061-ST | 2027-01-26 → 2026-11-07 A (-80d) | 2027-01-28 → 2027-02-09 (+12d) | 0% → 18% | -176d → -186d |
| RHD4CZ5C061ST3401 | Steel Cover for MH 1500 mm - (RD-C-6 /1)-Z5-C061-ST | 2027-01-30 → 2027-02-10 (+11d) | 2027-01-31 → 2027-02-11 (+11d) |  | -176d → -186d |
| RHD4CZ5C061ST3501 | Finishing, Benching, Testing works for MH 1500 mm - (RD-C-6 /1)-Z5-C061-ST | 2027-02-01 → 2027-02-13 (+12d) | 2027-02-03 → 2027-02-15 (+12d) |  | -176d → -186d |
| 3752 | **RHD4-02-002-L016-(ST)-MH Works - 1200 mm diameter** |  | 2027-02-01 → 2027-02-08 (+7d) |  |  |
| RHD4CZ5C061ST3100 | Excavation and PC Blinding works for MH 1200 mm - (RD-C-6 /1)-Z5-C061-ST |  | 2026-08-06 A → 2027-01-31 (+178d) | 100% → 67% | none → -188d |
| RHD4CZ5C061ST3200 | Installation of Base for MH 1200 mm - (RD-C-6 /1)-Z5-C061-ST |  | 2026-09-14 A → 2027-02-01 (+140d) | 100% → 67% | none → -188d |
| RHD4CZ5C061ST3300 | MH Ring and C.Slab works and Backfilling works for MH 1200 mm - (RD-C-6 /1)-Z5-C061-ST | 2027-01-26 → 2026-11-07 A (-80d) | 2027-01-27 → 2027-02-03 (+7d) | 0% → 67% | -182d → -188d |
| RHD4CZ5C061ST3400 | Steel Cover for MH 1200 mm - (RD-C-6 /1)-Z5-C061-ST | 2027-01-28 → 2027-02-04 (+7d) | 2027-01-30 → 2027-02-06 (+7d) |  | -148d → -154d |
| RHD4CZ5C061ST3500 | Finishing, Benching, Testing works for MH 1200 mm - (RD-C-6 /1)-Z5-C061-ST | 2027-01-31 → 2027-02-07 (+7d) | 2027-02-01 → 2027-02-08 (+7d) |  | -148d → -154d |
| 1844 | **RHD4-02-002-L016-(ST)-GRP Pipes - 400 mm diameter** |  | 2027-02-08 → 2027-02-15 (+7d) |  |  |
| RHD4CZ5C061ST1100 | Excavation works for GRP Pipe Line 400 mm - (RD-C-6 /1)-Z5-C061-ST |  | 2027-01-30 → 2027-02-06 (+7d) |  | -182d → -188d |
| RHD4CZ5C061ST1200 | Bedding works for GRP Pipe Line 400 mm - (RD-C-6 /1)-Z5-C061-ST |  | 2027-02-01 → 2027-02-08 (+7d) |  | -162d → -168d |
| RHD4CZ5C061ST1300 | Installing for GRP Pipe Line 400 mm - (RD-C-6 /1)-Z5-C061-ST |  | 2027-02-03 → 2027-02-10 (+7d) |  | -162d → -168d |
| RHD4CZ5C061ST1500 | Backfilling and warning tape works for GRP Pipe Line 400 mm - (RD-C-6 /1)-Z5-C061-ST |  | 2027-02-08 → 2027-02-15 (+7d) |  | -162d → -168d |
| RHD4CZ5C061ST1400 | Primary Test for GRP Pipe Line 400 mm - (RD-C-6 /1)-Z5-C061-ST | 2027-02-04 → 2027-02-11 (+7d) | 2027-02-06 → 2027-02-13 (+7d) |  | -162d → -168d |
| 3739 | **RHD4-02-002-L016-(ST)-GRP Pipes - 700 mm diameter** |  | 2027-01-30 → 2027-02-03 (+4d) |  |  |
| RHD4CZ5C061ST1403 | Primary Test for GRP Pipe Line 700 mm - (RD-C-6 /1)-Z5-C061-ST | 2027-01-28 → 2027-02-02 (+5d) | 2027-01-30 → 2027-02-03 (+4d) |  | -156d → -160d |
| 4496 | **RHD4-02-002-C061-(ST)-GRP Pipes - 800 mm diameter** |  | 2027-02-06 → 2027-02-10 (+4d) |  |  |
| RHD4CZ5C061ST1104 | Excavation works for GRP Pipe Line 800 mm - (RD-C-6 /1)-Z5-C061-ST |  | 2027-01-27 → 2027-02-01 (+5d) |  | -182d → -186d |
| RHD4CZ5C061ST1204 | Bedding works for GRP Pipe Line 800 mm - (RD-C-6 /1)-Z5-C061-ST |  | 2027-01-30 → 2027-02-03 (+4d) |  | -178d → -182d |
| RHD4CZ5C061ST1304 | Installing for GRP Pipe Line 800 mm - (RD-C-6 /1)-Z5-C061-ST |  | 2027-02-01 → 2027-02-06 (+5d) |  | -178d → -182d |
| RHD4CZ5C061ST1504 | Backfilling and warning tape works for GRP Pipe Line 800 mm - (RD-C-6 /1)-Z5-C061-ST |  | 2027-02-06 → 2027-02-10 (+4d) |  | -178d → -182d |
| RHD4CZ5C061ST1404 | Primary Test for GRP Pipe Line 800 mm - (RD-C-6 /1)-Z5-C061-ST | 2027-02-02 → 2027-02-07 (+5d) | 2027-02-03 → 2027-02-08 (+5d) |  | -178d → -182d |
| 4506 | **RHD4-02-002-C061-(ST)-UPVC Pipes - 300 mm diameter** | 2027-01-30 → 2027-02-10 (+11d) | 2027-02-10 → 2027-02-21 (+11d) |  |  |
| RHD4CZ5C061ST2100 | Excavation works for UPVC Pipe Line 300 mm - (RD-C-6 /1)-Z5-C061-ST | 2027-01-30 → 2027-02-10 (+11d) | 2027-01-31 → 2027-02-11 (+11d) |  | -155d → -165d |
| RHD4CZ5C061ST2200 | Bedding works for UPVC Pipe Line 300 mm - (RD-C-6 /1)-Z5-C061-ST | 2027-02-01 → 2027-02-13 (+12d) | 2027-02-02 → 2027-02-14 (+12d) |  | -155d → -165d |
| RHD4CZ5C061ST2300 | Installing for UPVC Pipe Line 300 mm - (RD-C-6 /1)-Z5-C061-ST | 2027-02-03 → 2027-02-15 (+12d) | 2027-02-04 → 2027-02-16 (+12d) |  | -155d → -165d |
| RHD4CZ5C061ST2400 | Primary Test for UPVC Pipe Line 300 mm - (RD-C-6 /1)-Z5-C061-ST | 2027-02-06 → 2027-02-17 (+11d) | 2027-02-07 → 2027-02-18 (+11d) |  | -155d → -165d |
| RHD4CZ5C061ST2500 | Backfilling and warning tape works for UPVC Pipe Line 300 mm - (RD-C-6 /1)-Z5-C061-ST | 2027-02-09 → 2027-02-20 (+11d) | 2027-02-10 → 2027-02-21 (+11d) |  | -156d → -165d |
| 4514 | **RHD4-02-002-C061-(ST)-Concrete Encasement** | 2027-02-03 → 2027-02-15 (+12d) | 2027-02-04 → 2027-02-16 (+12d) |  |  |
| RHD4CZ5C061ST6100 | Pipe Encasement for Storm Pipelines - (RD-C-6 /1)-Z5-C061-ST | 2027-02-03 → 2027-02-15 (+12d) | 2027-02-04 → 2027-02-16 (+12d) |  | -155d → -165d |
| 4515 | **RHD4-02-002-Z5-C061-Catch Basin - ST** |  | 2027-02-10 → 2027-02-23 (+13d) |  |  |
| 4516 | **RHD4-02-002-C061-(ST)-Single Catch Basin Works** |  | 2027-02-10 → 2027-02-23 (+13d) |  |  |
| RHD4CZ5C061ST7100 | Excavation works for Single Catch Basin - (RD-C-6 /1)-Z5-C061-ST |  | 2027-01-31 → 2027-02-11 (+11d) |  | -164d → -174d |
| RHD4CZ5C061ST7200 | PC Blinding, Installation and Pipe connection for Single Catch Basin - (RD-C-6 /1)-Z5-C061-ST |  | 2027-02-02 → 2027-02-14 (+12d) |  | -164d → -174d |
| RHD4CZ5C061ST7300 | Rings & C.Slab & Final Backfill for Single Catch Basin - (RD-C-6 /1)-Z5-C061-ST | 2027-02-03 → 2027-02-15 (+12d) | 2027-02-04 → 2027-02-16 (+12d) |  | -164d → -174d |
| RHD4CZ5C061ST7400 | Steel Cover for Single Catch Basin - (RD-C-6 /1)-Z5-C061-ST | 2027-02-06 → 2027-02-17 (+11d) | 2027-02-07 → 2027-02-18 (+11d) |  | -164d → -174d |
| RHD4CZ5C061ST7500 | Finishing and Insulation works for Single Catch Basin - (RD-C-6 /1)-Z5-C061-ST | 2027-02-08 → 2027-02-20 (+12d) | 2027-02-10 → 2027-02-23 (+13d) |  | -164d → -174d |
| 4299 | **RHD4-02-002-Z5-C061-Concrete Box Culvert - ST** |  | 2027-02-02 → 2027-02-09 (+7d) |  |  |
| 4300 | **RHD4-02-002-L061-(ST)-Concrete Box Culvert** |  | 2027-02-02 → 2027-02-09 (+7d) |  |  |
| RHD4CZ5C061ST4600 | Insulation and Testing for Box Culvert - (RD-C-6/1)-Z5-C061-ST |  | 2027-02-02 → 2027-02-09 (+7d) |  | -148d → -154d |
| 4301 | **RHD4-02-002-L061-(ST)-Concrete Chambers** | 2026-08-20 → 2027-01-09 (+142d) | 2027-01-10 → 2027-01-17 (+7d) |  |  |
| RHD4CZ5C061ST5100 | Excavation and Bedding for Concrete Chambers - for Box Culvert - (RD-C-6/1)-Z5-C061-ST | 2026-08-20 A → 2027-01-09 (+142d) | 2027-01-03 → 2027-01-10 (+7d) | 50% → 0% | -129d → -135d |
| RHD4CZ5C061ST5200 | PC works for Concrete Chambers - for Box Culvert - (RD-C-6/1)-Z5-C061-ST | 2026-08-25 A → 2027-01-11 (+139d) | 2027-01-05 → 2027-01-12 (+7d) | 50% → 0% | -129d → -135d |
| RHD4CZ5C061ST5300 | Installation for Concrete Chambers - for Box Culvert - (RD-C-6/1)-Z5-C061-ST | 2026-08-30 A → 2027-01-13 (+136d) | 2027-01-07 → 2027-01-14 (+7d) | 50% → 0% | -129d → -135d |
| RHD4CZ5C061ST5400 | Backfilling works for Concrete Chambers - for Box Culvert - (RD-C-6/1)-Z5-C061-ST | 2027-01-09 → 2027-01-16 (+7d) | 2027-01-10 → 2027-01-17 (+7d) |  | -129d → -135d |
| 4540 | **RHD4-02-002-Z5-C061-Sewage Network - SW** |  | 2027-03-14 → 2027-03-18 (+4d) |  |  |
| 1 | **Missing ID** | 2027-02-14 → 2027-02-18 (+4d) | 2027-02-25 → 2027-03-02 (+5d) |  |  |
| RHD4CZ5C061SW4100 | Excavation and Bedding for Wash out Chamber for HDPE force Main - (RD-C-6 /1)-Z5-C061-SW | 2027-02-14 → 2027-02-18 (+4d) | 2027-02-15 → 2027-02-19 (+4d) |  | -192d → -196d |
| RHD4CZ5C061SW4200 | PC works for Wash out Chamber for HDPE force Main - (RD-C-6 /1)-Z5-C061-SW | 2027-02-16 → 2027-02-20 (+4d) | 2027-02-17 → 2027-02-21 (+4d) |  | -192d → -196d |
| RHD4CZ5C061SW4300 | Installation for Wash out Chamber for HDPE force Main - (RD-C-6 /1)-Z5-C061-SW | 2027-02-18 → 2027-02-22 (+4d) | 2027-02-19 → 2027-02-23 (+4d) |  | -192d → -196d |
| RHD4CZ5C061SW4400 | Backfilling works for Wash out Chamber for HDPE force Main - (RD-C-6 /1)-Z5-C061-SW | 2027-02-20 → 2027-02-24 (+4d) | 2027-02-21 → 2027-02-25 (+4d) |  | -192d → -196d |
| RHD4CZ5C061SW5100 | Installation for Wash out Valves for HDPE force Main - (RD-C-6 /1)-Z5-C061-SW | 2027-02-22 → 2027-02-26 (+4d) | 2027-02-23 → 2027-02-27 (+4d) |  | -192d → -196d |
| RHD4CZ5C061SW5200 | Stem and Service box for Wash out Valves for HDPE force Main - (RD-C-6 /1)-Z5-C061-SW | 2027-02-24 → 2027-03-01 (+5d) | 2027-02-25 → 2027-03-02 (+5d) |  | -192d → -197d |
| 4358 | **RHD4-02-002-C061-(SW)-HDPE Pipes - 250 mm diameter** | 2027-02-11 → 2027-02-16 (+5d) | 2027-02-23 → 2027-02-28 (+5d) |  |  |
| RHD4CZ5C061SW2600 | Excavation works for HDPE Force Main Pipeline 250 mm - (RD-C-6 /1)-Z5-C061-SW | 2027-02-11 → 2027-02-16 (+5d) | 2027-02-13 → 2027-02-17 (+4d) |  | -163d → -167d |
| RHD4CZ5C061SW2700 | Bedding works for HDPE Force Main Pipeline 250 mm - (RD-C-6 /1)-Z5-C061-SW | 2027-02-14 → 2027-02-18 (+4d) | 2027-02-15 → 2027-02-20 (+5d) |  | -163d → -167d |
| RHD4CZ5C061SW2800 | Installing for HDPE Force Main Pipeline 250 mm - (RD-C-6 /1)-Z5-C061-SW | 2027-02-16 → 2027-02-21 (+5d) | 2027-02-17 → 2027-02-23 (+6d) |  | -163d → -167d |
| RHD4CZ5C061SW2900 | Primary Test for HDPE Force Main Pipeline 250 mm - (RD-C-6 /1)-Z5-C061-SW | 2027-02-18 → 2027-02-24 (+6d) | 2027-02-20 → 2027-02-25 (+5d) |  | -163d → -167d |
| RHD4CZ5C061SW3000 | Backfilling and warning tape works for HDPE Force Main Pipeline 250 mm - (RD-C-6 /1)-Z5-C061-SW | 2027-02-21 → 2027-02-27 (+6d) | 2027-02-23 → 2027-02-28 (+5d) |  | -163d → -167d |
| 4550 | **RHD4-02-002-C061-(SW)-MH Works - 1200 mm diameter** |  | 2027-03-08 → 2027-03-16 (+8d) |  |  |
| RHD4CZ5C061SW3100 | Excavation and PC Blinding works for MH 1200 mm - (RD-C-6 /1)-Z5-C061-SW |  | 2027-02-10 → 2027-02-15 (+5d) |  | -178d → -182d |
| RHD4CZ5C061SW3200 | Installation of Base for MH 1200 mm - (RD-C-6 /1)-Z5-C061-SW |  | 2027-02-15 → 2027-02-20 (+5d) |  | -178d → -182d |
| RHD4CZ5C061SW3300 | MH Ring and C.Slab works and Backfilling works for MH 1200 mm - (RD-C-6 /1)-Z5-C061-SW | 2027-02-16 → 2027-02-21 (+5d) | 2027-02-24 → 2027-03-01 (+5d) |  | -178d → -182d |
| RHD4CZ5C061SW3400 | Steel Cover for MH 1200 mm - (RD-C-6 /1)-Z5-C061-SW | 2027-02-25 → 2027-03-02 (+5d) | 2027-02-28 → 2027-03-04 (+4d) |  | -170d → -174d |
| RHD4CZ5C061SW3500 | Finishing, Benching, Testing works for MH 1200 mm - (RD-C-6 /1)-Z5-C061-SW | 2027-03-01 → 2027-03-06 (+5d) | 2027-03-08 → 2027-03-16 (+8d) |  | -170d → -174d |
| 4551 | **RHD4-02-002-C061-(SW)-MH Works - 1200 mm diameter with Back drop** |  | 2027-03-14 → 2027-03-18 (+4d) |  |  |

| ID | Task | Start | Finish | Total float |
| --- | --- | --- | --- | --- |
| RHD4CZ5C061SW3301 | MH Ring and C.Slab works and Backfilling works for MH 1200 mm - (RD-C-6 /1)-Z5-C061-SW | 2027-02-11 → 2027-02-16 (+5d) | 2027-02-13 → 2027-02-17 (+4d) | -169d → -173d |
| RHD4CZ5C061SW3401 | Steel Cover for MH 1200 mm - (RD-C-6 /1)-Z5-C061-SW | 2027-03-01 → 2027-03-06 (+5d) | 2027-03-02 → 2027-03-07 (+5d) | -165d → -169d |
| RHD4CZ5C061SW3501 | Finishing, Benching, Testing works for MH 1200 mm - (RD-C-6 /1)-Z5-C061-SW | 2027-03-13 → 2027-03-17 (+4d) | 2027-03-14 → 2027-03-18 (+4d) | -170d → -174d |
| 4542 | **RHD4-02-002-C061-(SW)-GRP Pipes - 400 mm diameter** |  | 2027-03-08 → 2027-03-16 (+8d) |  |
| RHD4CZ5C061SW1101 | Excavation works for GRP Pipe Line 400 mm - (RD-C-6 /1)-Z5-C061-SW |  | 2027-02-27 → 2027-03-03 (+4d) | -178d → -182d |
| RHD4CZ5C061SW1201 | Bedding works for GRP Pipe Line 400 mm - (RD-C-6 /1)-Z5-C061-SW | 2027-02-28 → 2027-03-04 (+4d) | 2027-03-01 → 2027-03-06 (+5d) | -178d → -182d |
| RHD4CZ5C061SW1301 | Installing for GRP Pipe Line 400 mm - (RD-C-6 /1)-Z5-C061-SW | 2027-03-02 → 2027-03-07 (+5d) | 2027-03-03 → 2027-03-08 (+5d) | -178d → -182d |
| RHD4CZ5C061SW1401 | Primary Test for GRP Pipe Line 400 mm - (RD-C-6 /1)-Z5-C061-SW | 2027-03-04 → 2027-03-13 (+9d) | 2027-03-06 → 2027-03-14 (+8d) | -178d → -182d |
| RHD4CZ5C061SW1501 | Backfilling and warning tape works for GRP Pipe Line 400 mm - (RD-C-6 /1)-Z5-C061-SW | 2027-03-07 → 2027-03-15 (+8d) | 2027-03-08 → 2027-03-16 (+8d) | -176d → -180d |
| 4541 | **RHD4-02-002-C061-(SW)-GRP Pipes - 300 mm diameter** |  | 2027-03-08 → 2027-03-16 (+8d) |  |
| RHD4CZ5C061SW1400 | Primary Test for GRP Pipe Line 300 mm - (RD-C-6 /1)-Z5-C061-SW | 2027-03-07 → 2027-03-15 (+8d) | 2027-03-08 → 2027-03-16 (+8d) | -178d → -182d |
| 4546 | **RHD4-02-002-C061-(SW)-UPVC Pipes - 200 mm diameter** |  | 2027-03-14 → 2027-03-18 (+4d) |  |
| RHD4CZ5C061SW2400 | Primary Test for UPVC Pipe Line 200 mm - (RD-C-6 /1)-Z5-C061-SW | 2027-03-13 → 2027-03-17 (+4d) | 2027-03-14 → 2027-03-18 (+4d) | -178d → -182d |
| 4577 | **RHD4-02-002-Z5-C061-Potable Network - PT** | 2027-03-15 → 2027-03-20 (+5d) | 2027-04-01 → 2027-04-06 (+5d) |  |
| 4579 | **RHD4-02-002-C061-(PT)-HDPE Pipes - 160 mm diameter** | 2027-03-15 → 2027-03-20 (+5d) | 2027-03-30 → 2027-04-04 (+5d) |  |
| RHD4CZ5C061PT1101 | Excavation works for HDPE Pipline 160 mm - (RD-C-6 /1)-Z5-C061-PT | 2027-03-15 → 2027-03-20 (+5d) | 2027-03-16 → 2027-03-21 (+5d) | -178d → -182d |
| RHD4CZ5C061PT1201 | Bedding works for HDPE Pipline 160 mm - (RD-C-6 /1)-Z5-C061-PT | 2027-03-17 → 2027-03-22 (+5d) | 2027-03-18 → 2027-03-23 (+5d) | -178d → -182d |
| RHD4CZ5C061PT1301 | Installing for HDPE Pipline 160 mm - (RD-C-6 /1)-Z5-C061-PT | 2027-03-20 → 2027-03-24 (+4d) | 2027-03-22 → 2027-03-27 (+5d) | -178d → -182d |
| RHD4CZ5C061PT1401 | Primary Test for HDPE Pipline 160 mm - (RD-C-6 /1)-Z5-C061-PT | 2027-03-25 → 2027-03-30 (+5d) | 2027-03-27 → 2027-03-31 (+4d) | -178d → -182d |
| RHD4CZ5C061PT1501 | Backfilling and warning tape works for HDPE Pipline 160 mm - (RD-C-6 /1)-Z5-C061-PT | 2027-03-28 → 2027-04-01 (+4d) | 2027-03-30 → 2027-04-04 (+5d) | -178d → -182d |
| 2888 | **RHD4-02-002-C061-(PT)-Fire Hydrant** | 2027-03-20 → 2027-03-24 (+4d) | 2027-03-30 → 2027-04-04 (+5d) |  |
| RHD4CZ5C061PT4100 | Excavation and Bedding and Pipe Installation for Fire Hydrant - (ROUND-07)-Z5-RA07-PT | 2027-03-20 → 2027-03-24 (+4d) | 2027-03-21 → 2027-03-25 (+4d) | -176d → -180d |
| RHD4CZ5C061PT4200 | Valve Installation for Fire Hydrant - (ROUND-07)-Z5-RA07-PT | 2027-03-22 → 2027-03-27 (+5d) | 2027-03-23 → 2027-03-28 (+5d) | -176d → -180d |
| RHD4CZ5C061PT4300 | Stem for Fire Hydrant - (ROUND-07)-Z5-RA07-PT | 2027-03-24 → 2027-03-29 (+5d) | 2027-03-25 → 2027-03-30 (+5d) | -176d → -180d |
| RHD4CZ5C061PT4400 | Fire Installation for Fire Hydrant - (ROUND-07)-Z5-RA07-PT | 2027-03-27 → 2027-03-31 (+4d) | 2027-03-28 → 2027-04-01 (+4d) | -176d → -180d |
| RHD4CZ5C061PT4500 | Protection Barriers for Fire Hydrant - (ROUND-07)-Z5-RA07-PT | 2027-03-29 → 2027-04-03 (+5d) | 2027-03-30 → 2027-04-04 (+5d) | -176d → -180d |
| 4586 | **RHD4-02-002-C061-(PT)-Wash out Valve Chambers** | 2027-03-17 → 2027-03-22 (+5d) | 2027-03-25 → 2027-03-30 (+5d) |  |
| RHD4CZ5C061PT2101 | Excavation and Bedding for Wash out Valve Chambers for Potable Water Network - (RD-C-6 /1)-Z5-C061-PT | 2027-03-17 → 2027-03-22 (+5d) | 2027-03-18 → 2027-03-23 (+5d) | -176d → -180d |
| RHD4CZ5C061PT2201 | PC works for Wash out Valve Chambers for Potable Water Network - (RD-C-6 /1)-Z5-C061-PT | 2027-03-20 → 2027-03-24 (+4d) | 2027-03-21 → 2027-03-25 (+4d) | -174d → -178d |
| RHD4CZ5C061PT2301 | Installation for Wash out Valve Chambers for Potable Water Network - (RD-C-6 /1)-Z5-C061-PT | 2027-03-22 → 2027-03-27 (+5d) | 2027-03-23 → 2027-03-28 (+5d) | -174d → -178d |
| RHD4CZ5C061PT2401 | Backfilling works for Wash out Valve Chambers for Potable Water Network - (RD-C-6 /1)-Z5-C061-PT | 2027-03-24 → 2027-03-29 (+5d) | 2027-03-25 → 2027-03-30 (+5d) | -174d → -178d |
| 4587 | **RHD4-02-002-C061-(PT)-Wash out Valves** | 2027-03-24 → 2027-03-29 (+5d) | 2027-03-28 → 2027-04-01 (+4d) |  |
| RHD4CZ5C061PT3102 | Installation for Wash out Valves for Potable Water Network - (RD-C-6 /1)-Z5-C061-PT | 2027-03-24 → 2027-03-29 (+5d) | 2027-03-25 → 2027-03-30 (+5d) | -174d → -178d |
| RHD4CZ5C061PT3202 | Stem and Service box for Wash out Valves for Potable Water Network - (RD-C-6 /1)-Z5-C061-PT | 2027-03-27 → 2027-03-31 (+4d) | 2027-03-28 → 2027-04-01 (+4d) | -174d → -178d |
| 4591 | **RHD4-02-002-C061-(PT)-Concrete Encasement** | 2027-03-20 → 2027-03-24 (+4d) | 2027-03-24 → 2027-03-29 (+5d) |  |
| RHD4CZ5C061PT5100 | Pipe Encasement for Potable Pipelines - (RD-C-6 /1)-Z5-C061-PT | 2027-03-20 → 2027-03-24 (+4d) | 2027-03-24 → 2027-03-29 (+5d) | -178d → -182d |
| 4583 | **RHD4-02-002-C061-(PT)-Gate Valves (Direct Buried)** | 2027-03-21 → 2027-03-25 (+4d) | 2027-04-01 → 2027-04-06 (+5d) |  |
| RHD4CZ5C061PT3100 | Installation for Direct Buried Gate Valves - (RD-C-6 /1)-Z5-C061-PT | 2027-03-21 → 2027-03-25 (+4d) | 2027-03-22 → 2027-03-27 (+5d) | -176d → -180d |
| RHD4CZ5C061PT3200 | Stem and Service box for Direct Buried Gate Valves - (RD-C-6 /1)-Z5-C061-PT | 2027-03-31 → 2027-04-05 (+5d) | 2027-04-01 → 2027-04-06 (+5d) | -178d → -182d |
| 4592 | **RHD4-02-002-Z5-C061-Irrigation Network - IRR** | 2027-03-17 → 2027-03-22 (+5d) | 2027-03-28 → 2027-04-01 (+4d) |  |
| 4595 | **RHD4-02-002-C061-(IRR)-HDPE Pipes - 200 mm diameter** | 2027-03-17 → 2027-03-22 (+5d) | 2027-03-28 → 2027-04-01 (+4d) |  |
| RHD4CZ5C061IRR1102 | Excavation works for HDPE Pipline 200 mm - (RD-C-6 /1)-Z5-C061-IRR | 2027-03-17 → 2027-03-22 (+5d) | 2027-03-18 → 2027-03-23 (+5d) | -174d → -178d |
| RHD4CZ5C061IRR1202 | Bedding works for HDPE Pipline 200 mm - (RD-C-6 /1)-Z5-C061-IRR | 2027-03-20 → 2027-03-24 (+4d) | 2027-03-21 → 2027-03-25 (+4d) | -174d → -178d |
| RHD4CZ5C061IRR1302 | Installing for HDPE Pipline 200 mm - (RD-C-6 /1)-Z5-C061-IRR | 2027-03-22 → 2027-03-27 (+5d) | 2027-03-23 → 2027-03-28 (+5d) | -174d → -178d |
| RHD4CZ5C061IRR1402 | Primary Test for HDPE Pipline 200 mm - (RD-C-6 /1)-Z5-C061-IRR | 2027-03-24 → 2027-03-29 (+5d) | 2027-03-25 → 2027-03-30 (+5d) | -174d → -178d |
| RHD4CZ5C061IRR1502 | Backfilling and warning tape works for HDPE Pipline 200 mm - (RD-C-6 /1)-Z5-C061-IRR | 2027-03-27 → 2027-03-31 (+4d) | 2027-03-28 → 2027-04-01 (+4d) | -174d → -178d |
| 4626 | **RHD4-02-002-Z5-C061-Medium Voltage Network - MV** | 2027-03-29 → 2027-04-03 (+5d) | 2027-08-25 → 2027-08-24 (-1d) |  |
| 4627 | **RHD4-02-002-C061-(MV)-Medium Voltage cable trench** | 2027-08-01 → 2027-07-31 (-1d) | 2027-08-10 → 2027-08-09 (-1d) |  |
| RHD4CZ5C061MV1100 | Excavation for Medium Voltage Trench - (RD-C-6 /1)-Z5-C061-MV | 2027-08-01 → 2027-07-31 (-1d) | 2027-08-03 → 2027-08-02 (-1d) | -172d → -171d |
| RHD4CZ5C061MV1200 | Trench Backfilling for Medium Voltage Network - (RD-C-6 /1)-Z5-C061-MV | 2027-08-08 → 2027-08-07 (-1d) | 2027-08-10 → 2027-08-09 (-1d) | -172d → -171d |
| 4628 | **RHD4-02-002-C061-(MV)-Medium Voltage duct banks** | 2027-03-29 → 2027-04-03 (+5d) | 2027-04-06 → 2027-04-11 (+5d) |  |
| RHD4CZ5C061MV2100 | Excavation of Duct Banks for Medium Voltage Network - (RD-C-6 /1)-Z5-C061-MV | 2027-03-29 → 2027-04-03 (+5d) | 2027-03-30 → 2027-04-04 (+5d) | -136d → -140d |
| RHD4CZ5C061MV2200 | Installation of Duct Banks for Medium Voltage Network - (RD-C-6 /1)-Z5-C061-MV | 2027-03-31 → 2027-04-05 (+5d) | 2027-04-01 → 2027-04-06 (+5d) | -136d → -140d |
| RHD4CZ5C061MV2300 | Pouring of Duct Banks for Medium Voltage Network - (RD-C-6 /1)-Z5-C061-MV | 2027-04-03 → 2027-04-07 (+4d) | 2027-04-04 → 2027-04-08 (+4d) | -136d → -140d |
| RHD4CZ5C061MV2400 | Backfilling of Duct Banks for Medium Voltage Network - (RD-C-6 /1)-Z5-C061-MV | 2027-04-05 → 2027-04-10 (+5d) | 2027-04-06 → 2027-04-11 (+5d) | -136d → -140d |
| 4629 | **RHD4-02-002-C061-(MV)-Medium Voltage cables 3Cx 500 mm²** | 2027-08-04 → 2027-08-03 (-1d) | 2027-08-15 → 2027-08-14 (-1d) |  |
| RHD4CZ5C061MV3100 | Installation of Medium Voltage Cables 3Cx 500 mm² - (RD-C-6 /1)-Z5-C061-MV | 2027-08-04 → 2027-08-03 (-1d) | 2027-08-07 → 2027-08-05 (-2d) | -172d → -171d |
| RHD4CZ5C061MV3300 | Testing of Medium Voltage Cables 3Cx 500 mm² - (RD-C-6 /1)-Z5-C061-MV | 2027-08-11 → 2027-08-10 (-1d) | 2027-08-12 → 2027-08-11 (-1d) | -163d → -162d |
| RHD4CZ5C061MV3400 | Termination of Medium Voltage Cables 3Cx 500 mm² - (RD-C-6 /1)-Z5-C061-MV | 2027-08-14 → 2027-08-12 (-2d) | 2027-08-15 → 2027-08-14 (-1d) | -163d → -162d |
| 4630 | **RHD4-02-002-C061-(MV)-Medium Voltage cables 3Cx 50 mm²** | 2027-08-04 → 2027-08-03 (-1d) | 2027-08-15 → 2027-08-14 (-1d) |  |
| RHD4CZ5C061MV3101 | Installation of Medium Voltage Cables 3Cx 50 mm² - (RD-C-6 /1)-Z5-C061-MV | 2027-08-04 → 2027-08-03 (-1d) | 2027-08-05 → 2027-08-04 (-1d) | -171d → -170d |
| RHD4CZ5C061MV3301 | Testing of Medium Voltage Cables 3Cx 50 mm² - (RD-C-6 /1)-Z5-C061-MV | 2027-08-11 → 2027-08-10 (-1d) | 2027-08-12 → 2027-08-11 (-1d) | -163d → -162d |
| RHD4CZ5C061MV3401 | Termination of Medium Voltage Cables 3Cx 50 mm² - (RD-C-6 /1)-Z5-C061-MV | 2027-08-14 → 2027-08-12 (-2d) | 2027-08-15 → 2027-08-14 (-1d) | -163d → -162d |
| 4632 | **RHD4-02-002-C061-(MV)-Unit Substations** | 2027-08-11 → 2027-08-10 (-1d) | 2027-08-25 → 2027-08-24 (-1d) |  |
| RHD4CZ5C061MV5100 | Excavation for Unit Substations for Medium Voltage Network - (RD-C-6 /1)-Z5-C061-MV | 2027-08-11 → 2027-08-10 (-1d) | 2027-08-12 → 2027-08-11 (-1d) | -172d → -171d |
| RHD4CZ5C061MV5200 | Concrete Base Placement for Unit Substations for Medium Voltage Network - (RD-C-6 /1)-Z5-C061-MV | 2027-08-14 → 2027-08-12 (-2d) | 2027-08-15 → 2027-08-14 (-1d) | -172d → -171d |
| RHD4CZ5C061MV5300 | Installation for Fences and doors for Medium Voltage Network - (RD-C-6 /1)-Z5-C061-MV | 2027-08-16 → 2027-08-15 (-1d) | 2027-08-21 → 2027-08-19 (-2d) | -172d → -171d |
| RHD4CZ5C061MV5400 | Installation for Unit Substations for Medium Voltage Network - (RD-C-6 /1)-Z5-C061-MV | 2027-08-22 → 2027-08-21 (-1d) | 2027-08-25 → 2027-08-24 (-1d) | -172d → -171d |
| 4633 | **RHD4-02-002-Z5-C061-Low Voltage Network - LV** | 2027-04-28 → 2027-04-27 (-1d) | 2027-05-31 → 2027-05-30 (-1d) |  |
| 4634 | **RHD4-02-002-C061-(LV)-Low Voltage duct banks** | 2027-04-28 → 2027-04-27 (-1d) | 2027-05-06 → 2027-05-05 (-1d) |  |

| ID | Task | Start | Finish | Total float |
| --- | --- | --- | --- | --- |
| RHD4CZ5C061LV2100 | Excavation of Duct Banks for Low Voltage Network - (RD-C-6 /1)-Z5-C061-LV | 2027-04-28 → 2027-04-27 (-1d) | 2027-04-29 → 2027-04-28 (-1d) | -142d → -141d |
| RHD4CZ5C061LV2200 | Installation of Duct Banks for Low Voltage Network - (RD-C-6 /1)-Z5-C061-LV | 2027-05-01 → 2027-04-29 (-2d) | 2027-05-02 → 2027-05-01 (-1d) | -142d → -141d |
| RHD4CZ5C061LV2300 | Pouring of Duct Banks for Low Voltage Network - (RD-C-6 /1)-Z5-C061-LV | 2027-05-03 → 2027-05-02 (-1d) | 2027-05-04 → 2027-05-03 (-1d) | -142d → -141d |
| RHD4CZ5C061LV2400 | Backfilling of Duct Banks for Low Voltage Network - (RD-C-6 /1)-Z5-C061-LV | 2027-05-05 → 2027-05-04 (-1d) | 2027-05-06 → 2027-05-05 (-1d) | -142d → -141d |
| 4636 | **RHD4-02-002-C061-(LV)-Low Voltage cables** | 2027-05-08 → 2027-05-06 (-2d) | 2027-05-24 → 2027-05-23 (-1d) |  |
| RHD4CZ5C061LV3100 | Excavation for Low Voltage Cables for Low Voltage Network - (RD-C-6 /1)-Z5-C061-LV | 2027-05-08 → 2027-05-06 (-2d) | 2027-05-10 → 2027-05-09 (-1d) | -142d → -141d |
| RHD4CZ5C061LV3200 | Cable Laying of Low Voltage Cables for Low Voltage Network - (RD-C-6 /1)-Z5-C061-LV | 2027-05-11 → 2027-05-10 (-1d) | 2027-05-13 → 2027-05-12 (-1d) | -142d → -141d |
| RHD4CZ5C061LV3300 | Warning tape and Backfill for Low Voltage Cables for Low Voltage Network - (RD-C-6 /1)-Z5-C061-LV | 2027-05-19 → 2027-05-13 (-6d) | 2027-05-22 → 2027-05-20 (-2d) | -142d → -141d |
| RHD4CZ5C061LV3400 | Testing of Low Voltage Cables for Low Voltage Network - (RD-C-6 /1)-Z5-C061-LV | 2027-05-23 → 2027-05-22 (-1d) | 2027-05-24 → 2027-05-23 (-1d) | -142d → -141d |
| 4637 | **RHD4-02-002-C061-(LV)-Low Voltage Distribution Pillars** | 2027-05-25 → 2027-05-24 (-1d) | 2027-05-31 → 2027-05-30 (-1d) |  |
| RHD4CZ5C061LV4100 | Leveling for Distribution Pillars for Low Voltage Network - (RD-C-6 /1)-Z5-C061-LV | 2027-05-25 → 2027-05-24 (-1d) | 2027-05-26 → 2027-05-25 (-1d) | -142d → -141d |
| RHD4CZ5C061LV4200 | Lean Concrete for Distribution Pillars for Low Voltage Network - (RD-C-6 /1)-Z5-C061-LV | 2027-05-27 → 2027-05-26 (-1d) | 2027-05-29 → 2027-05-27 (-2d) | -142d → -141d |
| RHD4CZ5C061LV4300 | Installation of Distribution Pillars for Low Voltage Network - (RD-C-6 /1)-Z5-C061-LV | 2027-05-30 → 2027-05-29 (-1d) | 2027-05-31 → 2027-05-30 (-1d) | -142d → -141d |
| 4639 | **RHD4-02-002-Z5-C061-Street Lighting Network - SL** | 2027-05-01 → 2027-04-29 (-2d) | 2027-06-28 → 2027-06-27 (-1d) |  |
| 4640 | **RHD4-02-002-C061-(SL)-Street Lighting duct banks** | 2027-05-01 → 2027-04-29 (-2d) | 2027-05-24 → 2027-05-23 (-1d) |  |
| RHD4CZ5C061SL2100 | Excavation of Duct Banks for Street Lighting Network - (RD-C-6 /1)-Z5-C061-SL | 2027-05-01 → 2027-04-29 (-2d) | 2027-05-04 → 2027-05-03 (-1d) | -142d → -141d |
| RHD4CZ5C061SL2200 | Installation of Duct Banks for Street Lighting Network - (RD-C-6 /1)-Z5-C061-SL | 2027-05-05 → 2027-05-04 (-1d) | 2027-05-11 → 2027-05-10 (-1d) | -142d → -141d |
| RHD4CZ5C061SL2300 | Pouring of Duct Banks for Street Lighting Network - (RD-C-6 /1)-Z5-C061-SL | 2027-05-12 → 2027-05-11 (-1d) | 2027-05-20 → 2027-05-19 (-1d) | -142d → -141d |
| RHD4CZ5C061SL2400 | Backfilling of Duct Banks for Street Lighting Network - (RD-C-6 /1)-Z5-C061-SL | 2027-05-22 → 2027-05-20 (-2d) | 2027-05-24 → 2027-05-23 (-1d) | -142d → -141d |
| 4641 | **RHD4-02-002-C061-(SL)-Street Lighting Drawpit** | 2027-06-01 → 2027-05-31 (-1d) | 2027-06-05 → 2027-06-03 (-2d) |  |
| RHD4CZ5C061SL5100 | Excavation of Drawpit size 600x600x900mm for Street Lighting Network - (RD-C-6 /1)-Z5-C061-SL | 2027-06-01 → 2027-05-31 (-1d) | 2027-06-02 → 2027-06-01 (-1d) | -142d → -141d |
| RHD4CZ5C061SL5200 | Installation of Drawpit size 600x600x900mm for Street Lighting Network - (RD-C-6 /1)-Z5-C061-SL | 2027-06-03 → 2027-06-02 (-1d) | 2027-06-05 → 2027-06-03 (-2d) | -142d → -141d |
| 4642 | **RHD4-02-002-C061-(SL)-Street Lighting cables** | 2027-06-06 → 2027-06-05 (-1d) | 2027-06-14 → 2027-06-13 (-1d) |  |
| RHD4CZ5C061SL3100 | Excavation for Street Lighting Cables for Street Lighting Network - (RD-C-6 /1)-Z5-C061-SL | 2027-06-06 → 2027-06-05 (-1d) | 2027-06-07 → 2027-06-06 (-1d) | -142d → -141d |
| RHD4CZ5C061SL3200 | Cable Laying of Street Lighting Cables for Street Lighting Network - (RD-C-6 /1)-Z5-C061-SL | 2027-06-08 → 2027-06-07 (-1d) | 2027-06-09 → 2027-06-08 (-1d) | -142d → -141d |
| RHD4CZ5C061SL3300 | Warning tape and Backfill for Street Lighting Cables for Street Lighting Network - (RD-C-6 /1)-Z5-C061-SL | 2027-06-10 → 2027-06-09 (-1d) | 2027-06-12 → 2027-06-10 (-2d) | -142d → -141d |
| RHD4CZ5C061SL3400 | Testing of Street Lighting Cables for Street Lighting Network - (RD-C-6 /1)-Z5-C061-SL | 2027-06-13 → 2027-06-12 (-1d) | 2027-06-14 → 2027-06-13 (-1d) | -142d → -141d |
| 4643 | **RHD4-02-002-C061-(SL)-Street Lighting Poles** | 2027-06-15 → 2027-06-14 (-1d) | 2027-06-26 → 2027-06-24 (-2d) |  |
| RHD4CZ5C061SL1100 | Excavation for RC Base for Lighting Poles for Street Lighting Network - (RD-C-6 /1)-Z5-C061-SL | 2027-06-15 → 2027-06-14 (-1d) | 2027-06-16 → 2027-06-15 (-1d) | -142d → -141d |
| RHD4CZ5C061SL1200 | Installation for RC Base for Lighting Poles for Street Lighting Network - (RD-C-6 /1)-Z5-C061-SL | 2027-06-17 → 2027-06-16 (-1d) | 2027-06-19 → 2027-06-17 (-2d) | -142d → -141d |
| RHD4CZ5C061SL1300 | Backfill for RC Base for Lighting Poles for Street Lighting Network - (RD-C-6 /1)-Z5-C061-SL | 2027-06-20 → 2027-06-19 (-1d) | 2027-06-21 → 2027-06-20 (-1d) | -142d → -141d |
| RHD4CZ5C061SL1400 | Installation for Lighting Poles for Street Lighting Network - (RD-C-6 /1)-Z5-C061-SL | 2027-06-22 → 2027-06-21 (-1d) | 2027-06-23 → 2027-06-22 (-1d) | -142d → -141d |
| RHD4CZ5C061SL1500 | Luminaire Installation for Lighting Poles for Street Lighting Network - (RD-C-6 /1)-Z5-C061-SL | 2027-06-24 → 2027-06-23 (-1d) | 2027-06-26 → 2027-06-24 (-2d) | -142d → -141d |
| 4644 | **RHD4-02-002-C061-(SL)-Street Lighting Feeder Pillars** | 2027-06-13 → 2027-06-12 (-1d) | 2027-06-26 → 2027-06-24 (-2d) |  |
| RHD4CZ5C061SL4100 | Leveling for Distribution Pillars for Street Lighting Network - (RD-C-6 /1)-Z5-C061-SL | 2027-06-13 → 2027-06-12 (-1d) | 2027-06-14 → 2027-06-13 (-1d) | -136d → -135d |
| RHD4CZ5C061SL4200 | Lean Concrete for Distribution Pillars for Street Lighting Network - (RD-C-6 /1)-Z5-C061-SL | 2027-06-15 → 2027-06-14 (-1d) | 2027-06-16 → 2027-06-15 (-1d) | -136d → -135d |
| RHD4CZ5C061SL4300 | Installation of Distribution Pillars for Street Lighting Network - (RD-C-6 /1)-Z5-C061-SL | 2027-06-24 → 2027-06-23 (-1d) | 2027-06-26 → 2027-06-24 (-2d) | -142d → -141d |
| 4645 | **RHD4-02-002-C061-(SL)-Street Lighting Earthing System** | 2027-06-27 → 2027-06-26 (-1d) | 2027-06-28 → 2027-06-27 (-1d) |  |
| RHD4CZ5C061SL6100 | Installation of Earthing for Lighting Poles and Fedder Pillers for Street Lighting Network - (RD-C-6 /1)-Z5-C061-SL | 2027-06-27 → 2027-06-26 (-1d) | 2027-06-28 → 2027-06-27 (-1d) | -142d → -141d |
| 4651 | **RHD4-02-002-Z5-C061-Telecommunications Network - TC** | 2027-01-26 → 2027-01-31 (+5d) | 2027-07-14 → 2027-07-13 (-1d) |  |
| 4652 | **RHD4-02-002-C061-(TC)-Telecommunications Ducts** | 2027-06-29 → 2027-06-28 (-1d) | 2027-07-14 → 2027-07-13 (-1d) |  |
| RHD4CZ5C061TC2100 | Excavation of HDPE Ducts for Telecom Network - (RD-C-6 /1)-Z5-C061-TC | 2027-06-29 → 2027-06-28 (-1d) | 2027-07-03 → 2027-07-01 (-2d) | -142d → -141d |
| RHD4CZ5C061TC2200 | Installation of HDPE Ducts for Telecom Network - (RD-C-6 /1)-Z5-C061-TC | 2027-07-04 → 2027-07-03 (-1d) | 2027-07-10 → 2027-07-08 (-2d) | -142d → -141d |
| RHD4CZ5C061TC2400 | Backfilling of HDPE Ducts for Telecom Network - (RD-C-6 /1)-Z5-C061-TC | 2027-07-11 → 2027-07-10 (-1d) | 2027-07-14 → 2027-07-13 (-1d) | -141d → -140d |
| 4653 | **RHD4-02-002-C061-(TC)-Telecommunications Manholes** | 2027-07-04 → 2027-07-03 (-1d) | 2027-07-07 → 2027-07-06 (-1d) |  |
| RHD4CZ5C061TC5100 | Excavation for Manholes for Telecom Network - (RD-C-6 /1)-Z5-C061-TC | 2027-07-04 → 2027-07-03 (-1d) | 2027-07-05 → 2027-07-04 (-1d) | -139d → -138d |
| RHD4CZ5C061TC5200 | Installation of Manholes for Telecom Network - (RD-C-6 /1)-Z5-C061-TC | 2027-07-06 → 2027-07-05 (-1d) | 2027-07-07 → 2027-07-06 (-1d) | -139d → -138d |
| 4654 | **RHD4-02-002-C061-(TC)-Telecomminications Road Crossings** | 2027-01-26 → 2027-01-31 (+5d) | 2027-02-03 → 2027-02-08 (+5d) |  |
| RHD4CZ5C061TC3100 | Excavation for Road Crossings for Telecom Network - (RD-C-6 /1)-Z5-C061-TC | 2027-01-26 → 2027-01-31 (+5d) | 2027-01-27 → 2027-02-01 (+5d) | -148d → -152d |
| RHD4CZ5C061TC3200 | Installation of Road Crossings for Telecom Network - (RD-C-6 /1)-Z5-C061-TC | 2027-01-28 → 2027-02-02 (+5d) | 2027-01-30 → 2027-02-03 (+4d) | -148d → -152d |
| RHD4CZ5C061TC3300 | Pouring of Road Crossings for Telecom Network - (RD-C-6 /1)-Z5-C061-TC | 2027-01-31 → 2027-02-04 (+4d) | 2027-02-01 → 2027-02-06 (+5d) | -148d → -152d |
| RHD4CZ5C061TC3400 | Backfilling of Road Crossings for Telecom Network - (RD-C-6 /1)-Z5-C061-TC | 2027-02-02 → 2027-02-07 (+5d) | 2027-02-03 → 2027-02-08 (+5d) | -148d → -152d |
| 4655 | **RHD4-02-002-Z5-C061-Information and Communication Technologies - ICT** | 2027-01-26 → 2027-01-31 (+5d) | 2027-08-30 → 2027-08-29 (-1d) |  |
| 4656 | **RHD4-02-002-C061-(ICT)-Information and Communication Technologies Ducts** | 2027-07-11 → 2027-07-10 (-1d) | 2027-08-30 → 2027-08-29 (-1d) |  |
| RHD4CZ5C061ICT2100 | Excavation of HDPE Ducts for ICT Network - (RD-C-6 /1)-Z5-C061-ICT | 2027-07-11 → 2027-07-10 (-1d) | 2027-07-14 → 2027-07-13 (-1d) | -142d → -141d |
| RHD4CZ5C061ICT2200 | Installation of HDPE Ducts for ICT Network - (RD-C-6 /1)-Z5-C061-ICT | 2027-07-15 → 2027-07-14 (-1d) | 2027-07-21 → 2027-07-20 (-1d) | -142d → -141d |
| RHD4CZ5C061ICT2400 | Backfilling of HDPE Ducts for ICT Network - (RD-C-6 /1)-Z5-C061-ICT | 2027-08-26 → 2027-08-25 (-1d) | 2027-08-30 → 2027-08-29 (-1d) | -172d → -171d |
| 4657 | **RHD4-02-002-C061-(ICT)-Information and Communication Technologies Manholes** | 2027-07-15 → 2027-07-14 (-1d) | 2027-07-21 → 2027-07-20 (-1d) |  |
| RHD4CZ5C061ICT5100 | Excavation for Manholes for ICT Network - (RD-C-6 /1)-Z5-C061-ICT | 2027-07-15 → 2027-07-14 (-1d) | 2027-07-18 → 2027-07-17 (-1d) | -142d → -141d |
| RHD4CZ5C061ICT5200 | Installation of Manholes for ICT Network - (RD-C-6 /1)-Z5-C061-ICT | 2027-07-19 → 2027-07-18 (-1d) | 2027-07-21 → 2027-07-20 (-1d) | -142d → -141d |
| 4658 | **RHD4-02-002-C061-(ICT)-Information and Communication Technologies Road Crossings** | 2027-01-26 → 2027-01-31 (+5d) | 2027-02-20 → 2027-02-24 (+4d) |  |
| RHD4CZ5C061ICT3100 | Excavation for Road Crossings for ICT Network - (RD-C-6 /1)-Z5-C061-ICT | 2027-01-26 → 2027-01-31 (+5d) | 2027-01-27 → 2027-02-01 (+5d) | -148d → -152d |
| RHD4CZ5C061ICT3200 | Installation of Road Crossings for ICT Network - (RD-C-6 /1)-Z5-C061-ICT | 2027-02-14 → 2027-02-03 (-11d) | 2027-02-15 → 2027-02-04 (-11d) | -162d → -153d |
| RHD4CZ5C061ICT3300 | Pouring of Road Crossings for ICT Network - (RD-C-6 /1)-Z5-C061-ICT | 2027-02-16 → 2027-02-06 (-10d) | 2027-02-17 → 2027-02-07 (-10d) | -162d → -153d |
| RHD4CZ5C061ICT3400 | Backfilling of Road Crossings for ICT Network - (RD-C-6 /1)-Z5-C061-ICT | 2027-02-18 → 2027-02-23 (+5d) | 2027-02-20 → 2027-02-24 (+4d) | -162d → -165d |
| 4659 | **RHD4-02-002-Z5-C061-Security Network - CCTV** | 2027-08-31 → 2027-08-30 (-1d) | 2027-10-07 → 2027-10-06 (-1d) |  |
| 4660 | **RHD4-02-002-C061-(CCTV)-Civil Works** | 2027-08-31 → 2027-08-30 (-1d) | 2027-09-11 → 2027-09-09 (-2d) |  |
| RHD4CZ5C061CCTV2100 | Civil Works for Security Network - (RD-C-6 /1)-Z5-C061-CCTV | 2027-08-31 → 2027-08-30 (-1d) | 2027-09-11 → 2027-09-09 (-2d) | -172d → -171d |
| 4661 | **RHD4-02-002-C061-(CCTV)-CCTV Poles** | 2027-09-12 → 2027-09-11 (-1d) | 2027-09-22 → 2027-09-21 (-1d) |  |
| RHD4CZ5C061CCTV1100 | Excavation for RC Base for CCTV Poles for Security Network - (RD-C-6 /1)-Z5-C061-CCTV | 2027-09-12 → 2027-09-11 (-1d) | 2027-09-13 → 2027-09-12 (-1d) | -172d → -171d |

| ID | Task | Start | Finish | Complete | Total float |
| --- | --- | --- | --- | --- | --- |
| RHD4CZ5C061CCTV1200 | Installation for RC Base for CCTV Poles for Security Network - (RD-C-6 /1)-Z5-C061-CCTV | 2027-09-14 → 2027-09-13 (-1d) | 2027-09-15 → 2027-09-14 (-1d) |  | -172d → -171d |
| RHD4CZ5C061CCTV1300 | Backfill for RC Base for CCTV Poles for Security Network - (RD-C-6 /1)-Z5-C061-CCTV | 2027-09-16 → 2027-09-15 (-1d) | 2027-09-18 → 2027-09-16 (-2d) |  | -172d → -171d |
| RHD4CZ5C061CCTV1400 | Installation for CCTV Poles for Security Network - (RD-C-6 /1)-Z5-C061-CCTV | 2027-09-19 → 2027-09-18 (-1d) | 2027-09-20 → 2027-09-19 (-1d) |  | -172d → -171d |
| RHD4CZ5C061CCTV1500 | Protection post Installation for CCTV Poles for Security Network - (RD-C-6 /1)-Z5-C061-CCTV | 2027-09-21 → 2027-09-20 (-1d) | 2027-09-22 → 2027-09-21 (-1d) |  | -172d → -171d |
| 4662 | **RHD4-02-002-C061-(CCTV)-Camera** | 2027-09-25 → 2027-09-22 (-3d) | 2027-09-26 → 2027-09-25 (-1d) |  |  |
| RHD4CZ5C061CCTV3100 | Installation for Cameras for Security Network - (RD-C-6 /1)-Z5-C061-CCTV | 2027-09-25 → 2027-09-22 (-3d) | 2027-09-26 → 2027-09-25 (-1d) |  | -172d → -171d |
| 4663 | **RHD4-02-002-C061-(CCTV)-Power and Infrastructure** | 2027-09-21 → 2027-09-20 (-1d) | 2027-09-26 → 2027-09-25 (-1d) |  |  |
| RHD4CZ5C061CCTV4100 | Installation of Power outlet, UPS and midspan for PTZ Camerafor Cameras for Security Network - (RD-C-6 /1)-Z5-C061-CCTV | 2027-09-21 → 2027-09-20 (-1d) | 2027-09-22 → 2027-09-21 (-1d) |  | -172d → -171d |
| RHD4CZ5C061CCTV4200 | Short Range Wireless PoP wireless Bridgefor CCTV Poles for Security Network - (RD-C-6 /1)-Z5-C061-CCTV | 2027-09-25 → 2027-09-22 (-3d) | 2027-09-26 → 2027-09-25 (-1d) |  | -172d → -171d |
| 4665 | **RHD4-02-002-C061-(CCTV)-CCTV Panels and Components** | 2027-09-27 → 2027-09-26 (-1d) | 2027-10-07 → 2027-10-06 (-1d) |  |  |
| RHD4CZ5C061CCTV6100 | Installation for CCTV Panels for Security Network - (RD-C-6 /1)-Z5-C061-CCTV | 2027-09-27 → 2027-09-26 (-1d) | 2027-10-07 → 2027-10-06 (-1d) |  | -172d → -171d |
| 4298 | **RHD4-02-002-Z5-L08** |  | 2028-02-03 → 2028-01-31 (-3d) |  |  |
| 4477 | **RHD4-02-002-Z5-L08-Road Works - RD** |  | 2028-02-03 → 2028-01-31 (-3d) |  |  |
| 4479 | **RHD4-02-002-L08-(RD)-Aggregate Base Course** | 2027-02-10 → 2027-02-11 (+1d) | 2027-02-17 → 2027-02-18 (+1d) |  |  |
| RHD4CZ5L08RD2100 | Supply, lay and compaction Aggregate base course compacted thickness 300 mmfor Roads - (RD-L-8)-Z5-L08-RD | 2027-02-10 → 2027-02-11 (+1d) | 2027-02-17 → 2027-02-18 (+1d) |  | -152d → -153d |
| 4480 | **RHD4-02-002-L08-(RD)-Bituminous base course Two Layers, including (MC1)&(RC2)** | 2027-02-18 → 2027-02-20 (+2d) | 2027-11-13 → 2027-11-10 (-3d) |  |  |
| RHD4CZ5L08RD3100 | Supply, lay and Asphaltic base course including Prime Coat (MC1) for 1st Layer - (RD-L-8)-Z5-L08-RD | 2027-02-18 → 2027-02-20 (+2d) | 2027-02-20 → 2027-02-21 (+1d) |  | -152d → -153d |
| RHD4CZ5L08RD3200 | Supply, lay and Asphaltic base course including Tack Coat (RC2) for 2nd Layer - (RD-L-8)-Z5-L08-RD | 2027-11-10 → 2027-11-09 (-1d) | 2027-11-13 → 2027-11-10 (-3d) |  | -138.02d → -137d |
| 4482 | **RHD4-02-002-L08-(RD)-Precast Concrete Curb** | 2027-11-13 → 2027-11-11 (-2d) | 2027-11-21 → 2027-11-18 (-3d) |  |  |
| RHD4CZ5L08RD5100 | Supply and installation Precast Concrete Kerb for Roads - (RD-L-8)-Z5-L08-RD | 2027-11-13 → 2027-11-11 (-2d) | 2027-11-21 → 2027-11-18 (-3d) |  | -138.02d → -137d |
| 4485 | **RHD4-02-002-L08-(RD)-Traffic Signage** | 2027-11-21 → 2027-11-20 (-1d) | 2027-11-29 → 2027-11-27 (-2d) |  |  |
| RHD4CZ5L08RD8100 | Installation of Traffic Signage for Road Network - (RD-L-8)-Z5-L08-RD | 2027-11-21 → 2027-11-20 (-1d) | 2027-11-29 → 2027-11-27 (-2d) |  | -138.02d → -137d |
| 4483 | **RHD4-02-002-L08-(RD)-Precast Interlocking Block Pavers** | 2027-11-29 → 2027-11-28 (-1d) | 2027-12-09 → 2027-12-07 (-2d) |  |  |
| RHD4CZ5L08RD6100 | Interlocking block pavers for sidewalk-footpath for Side walks and Parking areas - (RD-L-8)-Z5-L08-RD | 2027-11-29 → 2027-11-28 (-1d) | 2027-12-09 → 2027-12-07 (-2d) |  | -122.02d → -121d |
| 4481 | **RHD4-02-002-L08-(RD)-Bituminous concrete wearing course including tack coat (RC2)** | 2027-12-09 → 2027-12-08 (-1d) | 2027-12-12 → 2027-12-09 (-3d) |  |  |
| RHD4CZ5L08RD4100 | Supply, lay and compaction Asphaltic wearing course including tack Coat (RC2)for Road Network - (RD-L-8)-Z5-L08-RD | 2027-12-09 → 2027-12-08 (-1d) | 2027-12-12 → 2027-12-09 (-3d) |  | -122.02d → -121d |
| 4484 | **RHD4-02-002-L08-(RD)-Pavement Marking** | 2028-01-31 → 2028-01-29 (-2d) | 2028-02-03 → 2028-01-31 (-3d) |  |  |
| RHD4CZ5L08RD7100 | Pavement Markings for Road Network - (RD-L-8)-Z5-L08-RD | 2028-01-31 → 2028-01-29 (-2d) | 2028-02-03 → 2028-01-31 (-3d) |  | -190.02d → -188d |
| 4302 | **RHD4-02-002-Z5-L08-Storm Network - ST** |  | 2027-02-27 → 2027-02-25 (-2d) |  |  |
| 4321 | **RHD4-02-002-L08-(ST)-MH Works - 2000 mm diameter** |  | 2027-02-14 → 2027-02-15 (+1d) |  |  |
| RHD4CZ5L08ST3102 | Excavation and PC Blinding works for MH 2000 mm - (RD-L-8)-Z5-L08-ST |  | 2027-01-28 → 2027-01-30 (+2d) |  | -193d → -194d |
| RHD4CZ5L08ST3202 | Installation of Base for MH 2000 mm - (RD-L-8)-Z5-L08-ST |  | 2027-02-02 → 2027-02-03 (+1d) |  | -193d → -194d |
| RHD4CZ5L08ST3302 | MH Ring and C.Slab works and Backfilling works for MH 2000 mm - (RD-L-8)-Z5-L08-ST | 2027-02-03 → 2027-02-04 (+1d) | 2027-02-07 → 2027-02-08 (+1d) |  | -193d → -194d |
| RHD4CZ5L08ST3402 | Steel Cover for MH 2000 mm - (RD-L-8)-Z5-L08-ST | 2027-02-08 → 2027-02-09 (+1d) | 2027-02-10 → 2027-02-11 (+1d) |  | -193d → -194d |
| RHD4CZ5L08ST3502 | Finishing, Benching, Testing works for MH 2000 mm - (RD-L-8)-Z5-L08-ST | 2027-02-11 → 2027-02-13 (+2d) | 2027-02-14 → 2027-02-15 (+1d) |  | -193d → -194d |
| 4319 | **RHD4-02-002-L08-(ST)-MH Works - 1200 mm diameter** |  | 2027-02-15 → 2027-02-16 (+1d) |  |  |
| RHD4CZ5L08ST3200 | Installation of Base for MH 1200 mm - (RD-L-8)-Z5-L08-ST |  | 2027-01-31 → 2026-11-08 A (-84d) | 50% → 100% | -186d → none |
| RHD4CZ5L08ST3300 | MH Ring and C.Slab works and Backfilling works for MH 1200 mm - (RD-L-8)-Z5-L08-ST | 2027-02-01 → 2027-01-31 (-1d) | 2027-02-02 → 2027-02-01 (-1d) |  | -186d → -185d |
| RHD4CZ5L08ST3400 | Steel Cover for MH 1200 mm - (RD-L-8)-Z5-L08-ST | 2027-02-11 → 2027-02-13 (+2d) | 2027-02-13 → 2027-02-14 (+1d) |  | -188d → -189d |
| RHD4CZ5L08ST3500 | Finishing, Benching, Testing works for MH 1200 mm - (RD-L-8)-Z5-L08-ST | 2027-02-14 → 2027-02-15 (+1d) | 2027-02-15 → 2027-02-16 (+1d) |  | -188d → -189d |
| 6393 | **RHD4-02-002-L08-(ST)-GRP Pipes - 1300 mm diameter** |  | 2027-02-09 → 2027-02-10 (+1d) |  |  |
| RHD4CZ5L08ST1109 | Excavation works for GRP Pipe Line 1300 mm - (RD-L-8)-Z5-L08-ST |  | 2027-01-31 → 2027-02-01 (+1d) |  | -171d → -172d |
| RHD4CZ5L08ST1209 | Bedding works for GRP Pipe Line 1300 mm - (RD-L-8)-Z5-L08-ST |  | 2027-02-02 → 2027-02-03 (+1d) |  | -171d → -172d |
| RHD4CZ5L08ST1309 | Installing for GRP Pipe Line 1300 mm - (RD-L-8)-Z5-L08-ST |  | 2027-02-04 → 2027-02-06 (+2d) |  | -171d → -172d |
| RHD4CZ5L08ST1509 | Backfilling and warning tape works for GRP Pipe Line 1300 mm - (RD-L-8)-Z5-L08-ST |  | 2027-02-09 → 2027-02-10 (+1d) |  | -171d → -172d |
| RHD4CZ5L08ST1409 | Primary Test for GRP Pipe Line 1300 mm - (RD-L-8)-Z5-L08-ST | 2027-02-06 → 2027-02-07 (+1d) | 2027-02-07 → 2027-02-08 (+1d) |  | -171d → -172d |
| 2414 | **RHD4-02-002-L08-(ST)-GRP Pipes - 600 mm diameter** |  | 2027-01-31 → 2027-02-01 (+1d) |  |  |
| RHD4CZ5L08ST1402 | Primary Test for GRP Pipe Line 600 mm - (RD-L-8)-Z5-L08-ST | 2027-01-30 → 2027-01-31 (+1d) | 2027-01-31 → 2027-02-01 (+1d) |  | -158d → -159d |
| 4304 | **RHD4-02-002-L08-(ST)-GRP Pipes - 500 mm diameter** |  | 2027-01-31 → 2027-02-01 (+1d) |  |  |
| RHD4CZ5L08ST1401 | Primary Test for GRP Pipe Line 500 mm - (RD-L-8)-Z5-L08-ST | 2027-01-30 → 2027-01-31 (+1d) | 2027-01-31 → 2027-02-01 (+1d) |  | -158d → -159d |
| 4303 | **RHD4-02-002-L08-(ST)-GRP Pipes - 400 mm diameter** |  | 2027-01-31 → 2027-02-01 (+1d) |  |  |
| RHD4CZ5L08ST1400 | Primary Test for GRP Pipe Line 400 mm - (RD-L-8)-Z5-L08-ST | 2027-01-30 → 2027-01-31 (+1d) | 2027-01-31 → 2027-02-01 (+1d) |  | -158d → -159d |
| 4317 | **RHD4-02-002-L08-(ST)-UPVC Pipes - 300 mm diameter** |  | 2027-02-27 → 2027-02-25 (-2d) |  |  |
| RHD4CZ5L08ST2100 | Excavation works for UPVC Pipe Line 300 mm - (RD-L-8)-Z5-L08-ST |  | 2027-02-15 → 2027-02-14 (-1d) |  | -177d → -176d |
| RHD4CZ5L08ST2300 | Installing for UPVC Pipe Line 300 mm - (RD-L-8)-Z5-L08-ST |  | 2027-02-20 → 2027-02-18 (-2d) |  | -177d → -176d |
| RHD4CZ5L08ST2200 | Bedding works for UPVC Pipe Line 300 mm - (RD-L-8)-Z5-L08-ST |  | 2027-02-17 → 2027-02-16 (-1d) |  | -177d → -176d |
| RHD4CZ5L08ST2400 | Primary Test for UPVC Pipe Line 300 mm - (RD-L-8)-Z5-L08-ST | 2027-02-21 → 2027-02-20 (-1d) | 2027-02-23 → 2027-02-21 (-2d) |  | -177d → -176d |
| RHD4CZ5L08ST2500 | Backfilling and warning tape works for UPVC Pipe Line 300 mm - (RD-L-8)-Z5-L08-ST | 2027-02-24 → 2027-02-23 (-1d) | 2027-02-27 → 2027-02-25 (-2d) |  | -177d → -176d |
| 4325 | **RHD4-02-002-L08-(ST)-Concrete Encasement** | 2027-02-18 → 2027-02-17 (-1d) | 2027-02-20 → 2027-02-18 (-2d) |  |  |
| RHD4CZ5L08ST6100 | Pipe Encasement for Storm Pipelines - (RD-L-8)-Z5-L08-ST | 2027-02-18 → 2027-02-17 (-1d) | 2027-02-20 → 2027-02-18 (-2d) |  | -175d → -174d |
| 4326 | **RHD4-02-002-Z5-L08-Catch Basin - ST** |  | 2027-02-23 → 2027-02-21 (-2d) |  |  |
| 4327 | **RHD4-02-002-L08-(ST)-Single Catch Basin Works** |  | 2027-02-23 → 2027-02-21 (-2d) |  |  |
| RHD4CZ5L08ST7100 | Excavation works for Single Catch Basin - (RD-L-8)-Z5-L08-ST |  | 2027-02-06 → 2027-02-04 (-2d) |  | -186d → -185d |
| RHD4CZ5L08ST7200 | PC Blinding, Installation and Pipe connection for Single Catch Basin - (RD-L-8)-Z5-L08-ST |  | 2027-02-09 → 2027-02-08 (-1d) |  | -186d → -185d |
| RHD4CZ5L08ST7300 | Rings & C.Slab & Final Backfill for Single Catch Basin - (RD-L-8)-Z5-L08-ST |  | 2027-02-13 → 2027-02-11 (-2d) |  | -186d → -185d |
| RHD4CZ5L08ST7400 | Steel Cover for Single Catch Basin - (RD-L-8)-Z5-L08-ST | 2027-02-14 → 2027-02-13 (-1d) | 2027-02-16 → 2027-02-15 (-1d) |  | -186d → -185d |
| RHD4CZ5L08ST7500 | Finishing and Insulation works for Single Catch Basin - (RD-L-8)-Z5-L08-ST | 2027-02-17 → 2027-02-16 (-1d) | 2027-02-23 → 2027-02-21 (-2d) |  | -186d → -185d |
| 4299 | **RHD4-02-002-Z5-L08-Concrete Box Culvert - ST** |  | 2027-03-21 → 2027-03-22 (+1d) |  |  |
| 4300 | **RHD4-02-002-L08-(ST)-Concrete Box Culvert** |  | 2027-03-21 → 2027-03-22 (+1d) |  |  |
| RHD4CZ5L08ST4700 | Backfilling works for Box Culvert - (RD-L-8)-Z5-L08-ST |  | 2027-03-21 → 2027-03-22 (+1d) |  | -161d → -162d |

| ID | Task | Start | Finish | Complete | Total float |
| --- | --- | --- | --- | --- | --- |
| 4301 | **RHD4-02-002-L08-(ST)-Concrete Chambers** | 2026-08-20 → 2027-03-06 (+198d) | 2027-03-21 → 2027-03-22 (+1d) |  |  |
| RHD4CZ5L08ST5100 | Excavation and Bedding for Concrete Chambers - for Box Culvert - (RD-L-8)-Z5-L08-ST | 2026-08-20 A → 2027-03-06 (+198d) | 2027-03-07 → 2027-03-08 (+1d) | 50% → 0% | -161d → -162d |
| RHD4CZ5L08ST5200 | PC works for Concrete Chambers - for Box Culvert - (RD-L-8)-Z5-L08-ST | 2026-08-25 A → 2027-03-13 (+200d) | 2027-03-14 → 2027-03-15 (+1d) | 50% → 0% | -161d → -162d |
| RHD4CZ5L08ST5300 | Installation for Concrete Chambers - for Box Culvert - (RD-L-8)-Z5-L08-ST | 2026-08-30 A → 2027-03-16 (+198d) | 2027-03-17 → 2027-03-18 (+1d) | 50% → 0% | -161d → -162d |
| RHD4CZ5L08ST5400 | Backfilling works for Concrete Chambers - for Box Culvert - (RD-L-8)-Z5-L08-ST | 2027-03-18 → 2027-03-20 (+2d) | 2027-03-21 → 2027-03-22 (+1d) |  | -161d → -162d |
| 4351 | **RHD4-02-002-Z5-L08-Sewage Network - SW** |  | 2027-05-19 → 2027-05-12 (-7d) |  |  |
| 957 | **RHD4-02-002-L08-(SW)-MH Works - 1200 mm diameter with Back drop** |  | 2027-04-14 → 2027-04-15 (+1d) |  |  |
| RHD4CZ5L08SW3201 | Installation of Base for MH 1200 mm - (RD-L-8)-Z5-L08-SW |  | 2027-03-28 → 2027-03-29 (+1d) |  | -148d → -149d |
| RHD4CZ5L08SW3301 | MH Ring and C.Slab works and Backfilling works for MH 1200 mm - (RD-L-8)-Z5-L08-SW | 2027-03-29 → 2027-03-30 (+1d) | 2027-04-04 → 2027-04-05 (+1d) |  | -148d → -149d |
| RHD4CZ5L08SW3401 | Steel Cover for MH 1200 mm - (RD-L-8)-Z5-L08-SW | 2027-04-05 → 2027-04-06 (+1d) | 2027-04-07 → 2027-04-08 (+1d) |  | -148d → -149d |
| RHD4CZ5L08SW3501 | Finishing, Benching, Testing works for MH 1200 mm - (RD-L-8)-Z5-L08-SW | 2027-04-08 → 2027-04-10 (+2d) | 2027-04-14 → 2027-04-15 (+1d) |  | -148d → -149d |
| 4361 | **RHD4-02-002-L08-(SW)-MH Works - 1200 mm diameter** |  | 2027-05-06 → 2027-05-04 (-2d) |  |  |
| RHD4CZ5L08SW3100 | Excavation and PC Blinding works for MH 1200 mm - (RD-L-8)-Z5-L08-SW |  | 2027-03-24 → 2027-03-25 (+1d) |  | -161d → -162d |
| RHD4CZ5L08SW3200 | Installation of Base for MH 1200 mm - (RD-L-8)-Z5-L08-SW |  | 2027-03-30 → 2027-03-31 (+1d) |  | -161d → -162d |
| RHD4CZ5L08SW3300 | MH Ring and C.Slab works and Backfilling works for MH 1200 mm - (RD-L-8)-Z5-L08-SW | 2027-04-07 → 2027-04-06 (-1d) | 2027-04-19 → 2027-04-17 (-2d) |  | -167.02d → -166d |
| RHD4CZ5L08SW3400 | Steel Cover for MH 1200 mm - (RD-L-8)-Z5-L08-SW | 2027-04-19 → 2027-04-18 (-1d) | 2027-04-25 → 2027-04-22 (-3d) |  | -152.02d → -149d |
| RHD4CZ5L08SW3500 | Finishing, Benching, Testing works for MH 1200 mm - (RD-L-8)-Z5-L08-SW | 2027-04-25 → 2027-04-24 (-1d) | 2027-05-06 → 2027-05-04 (-2d) |  | -152.02d → -149d |
| 4352 | **RHD4-02-002-L08-(SW)-GRP Pipes - 300 mm diameter** |  | 2027-05-02 → 2027-04-29 (-3d) |  |  |
| RHD4CZ5L08SW1100 | Excavation works for GRP Pipe Line 300 mm - (RD-L-8)-Z5-L08-SW |  | 2027-04-03 → 2027-04-04 (+1d) |  | -154d → -155d |
| RHD4CZ5L08SW1200 | Bedding works for GRP Pipe Line 300 mm - (RD-L-8)-Z5-L08-SW |  | 2027-04-06 → 2027-04-07 (+1d) |  | -154d → -155d |
| RHD4CZ5L08SW1300 | Installing for GRP Pipe Line 300 mm - (RD-L-8)-Z5-L08-SW |  | 2027-04-22 → 2027-04-20 (-2d) |  | -164.02d → -163d |
| RHD4CZ5L08SW1500 | Backfilling and warning tape works for GRP Pipe Line 300 mm - (RD-L-8)-Z5-L08-SW |  | 2027-05-02 → 2027-04-29 (-3d) |  | -164.02d → -163d |
| RHD4CZ5L08SW1400 | Primary Test for GRP Pipe Line 300 mm - (RD-L-8)-Z5-L08-SW | 2027-04-22 → 2027-04-21 (-1d) | 2027-04-28 → 2027-04-26 (-2d) |  | -164.02d → -163d |
| 4357 | **RHD4-02-002-L08-(SW)-UPVC Pipes - 200 mm diameter** |  | 2027-05-04 → 2027-05-02 (-2d) |  |  |
| RHD4CZ5L08SW2100 | Excavation works for UPVC Pipe Line 200 mm - (RD-L-8)-Z5-L08-SW |  | 2027-04-05 → 2027-04-06 (+1d) |  | -142d → -143d |
| RHD4CZ5L08SW2200 | Bedding works for UPVC Pipe Line 200 mm - (RD-L-8)-Z5-L08-SW |  | 2027-04-08 → 2027-04-10 (+2d) |  | -143d → -144d |
| RHD4CZ5L08SW2300 | Installing for UPVC Pipe Line 200 mm - (RD-L-8)-Z5-L08-SW |  | 2027-04-25 → 2027-04-22 (-3d) |  | -154.02d → -153d |
| RHD4CZ5L08SW2500 | Backfilling and warning tape works for UPVC Pipe Line 200 mm - (RD-L-8)-Z5-L08-SW |  | 2027-05-04 → 2027-05-02 (-2d) |  | -152.02d → -151d |
| RHD4CZ5L08SW2400 | Primary Test for UPVC Pipe Line 200 mm - (RD-L-8)-Z5-L08-SW | 2027-04-28 → 2027-04-27 (-1d) | 2027-05-01 → 2027-04-28 (-3d) |  | -151.02d → -150d |
| 4358 | **RHD4-02-002-L08-(SW)-HDPE Pipes - 250 mm diameter** | 2027-03-31 → 2027-04-01 (+1d) | 2027-05-03 → 2027-05-01 (-2d) |  |  |
| RHD4CZ5L08SW2600 | Excavation works for HDPE Force Main Pipeline 250 mm - (RD-L-8)-Z5-L08-SW | 2027-03-31 → 2027-04-01 (+1d) | 2027-04-03 → 2027-04-04 (+1d) |  | -153d → -154d |
| RHD4CZ5L08SW2700 | Bedding works for HDPE Force Main Pipeline 250 mm - (RD-L-8)-Z5-L08-SW | 2027-04-04 → 2027-04-05 (+1d) | 2027-04-06 → 2027-04-07 (+1d) |  | -153d → -154d |
| RHD4CZ5L08SW2800 | Installing for HDPE Force Main Pipeline 250 mm - (RD-L-8)-Z5-L08-SW | 2027-04-19 → 2027-04-18 (-1d) | 2027-04-25 → 2027-04-22 (-3d) |  | -163.02d → -162d |
| RHD4CZ5L08SW2900 | Primary Test for HDPE Force Main Pipeline 250 mm - (RD-L-8)-Z5-L08-SW | 2027-04-25 → 2027-04-24 (-1d) | 2027-04-27 → 2027-04-25 (-2d) |  | -163.02d → -162d |
| RHD4CZ5L08SW3000 | Backfilling and warning tape works for HDPE Force Main Pipeline 250 mm - (RD-L-8)-Z5-L08-SW | 2027-04-28 → 2027-04-27 (-1d) | 2027-05-03 → 2027-05-01 (-2d) |  | -164.02d → -163d |
| 4360 | **RHD4-02-002-L08-(SW)-Concrete Encasement** | 2027-04-22 → 2027-04-21 (-1d) | 2027-05-19 → 2027-05-12 (-7d) |  |  |
| RHD4CZ5L08SW6100 | Pipe Encasement for Sewage Pipelines - (RD-L-8)-Z5-L08-SW | 2027-04-22 → 2027-04-21 (-1d) | 2027-05-19 → 2027-05-12 (-7d) |  | -154.02d → -153d |
| 4388 | **RHD4-02-002-Z5-L08-Potable Network - PT** |  | 2027-05-27 → 2027-05-25 (-2d) |  |  |
| 4389 | **RHD4-02-002-L08-(PT)-HDPE Pipes - 110 mm diameter** |  | 2027-05-01 → 2027-04-28 (-3d) |  |  |
| RHD4CZ5L08PT1100 | Excavation works for HDPE Pipline 110 mm - (RD-L-8)-Z5-L08-PT |  | 2027-04-21 → 2027-04-19 (-2d) |  | -167.02d → -166d |
| RHD4CZ5L08PT1200 | Bedding works for HDPE Pipline 110 mm - (RD-L-8)-Z5-L08-PT | 2027-04-21 → 2027-04-20 (-1d) | 2027-04-24 → 2027-04-21 (-3d) |  | -167.02d → -166d |
| RHD4CZ5L08PT1300 | Installing for HDPE Pipline 110 mm - (RD-L-8)-Z5-L08-PT | 2027-04-24 → 2027-04-22 (-2d) | 2027-04-26 → 2027-04-24 (-2d) |  | -167.02d → -166d |
| RHD4CZ5L08PT1400 | Primary Test for HDPE Pipline 110 mm - (RD-L-8)-Z5-L08-PT | 2027-04-26 → 2027-04-25 (-1d) | 2027-04-28 → 2027-04-26 (-2d) |  | -167.02d → -166d |
| RHD4CZ5L08PT1500 | Backfilling and warning tape works for HDPE Pipline 110 mm - (RD-L-8)-Z5-L08-PT | 2027-04-28 → 2027-04-27 (-1d) | 2027-05-01 → 2027-04-28 (-3d) |  | -167.02d → -166d |
| 4390 | **RHD4-02-002-L08-(PT)-HDPE Pipes - 160 mm diameter** | 2027-04-21 → 2026-10-17 (-186d) | 2027-05-13 → 2027-05-11 (-2d) |  |  |
| RHD4CZ5L08PT1101 | Excavation works for HDPE Pipline 160 mm - (RD-L-8)-Z5-L08-PT | 2027-04-21 → 2026-10-17 A (-186d) | 2027-04-26 → 2027-04-24 (-2d) | 0% → 64% | -156.02d → -155d |
| RHD4CZ5L08PT1201 | Bedding works for HDPE Pipline 160 mm - (RD-L-8)-Z5-L08-PT | 2027-04-26 → 2027-04-25 (-1d) | 2027-04-29 → 2027-04-27 (-2d) |  | -156.02d → -155d |
| RHD4CZ5L08PT1301 | Installing for HDPE Pipline 160 mm - (RD-L-8)-Z5-L08-PT | 2027-04-29 → 2027-04-28 (-1d) | 2027-05-06 → 2027-05-04 (-2d) |  | -156.02d → -155d |
| RHD4CZ5L08PT1401 | Primary Test for HDPE Pipline 160 mm - (RD-L-8)-Z5-L08-PT | 2027-05-06 → 2027-05-05 (-1d) | 2027-05-09 → 2027-05-06 (-3d) |  | -156.02d → -155d |
| RHD4CZ5L08PT1501 | Backfilling and warning tape works for HDPE Pipline 160 mm - (RD-L-8)-Z5-L08-PT | 2027-05-09 → 2027-05-08 (-1d) | 2027-05-13 → 2027-05-11 (-2d) |  | -156.02d → -155d |
| 4394 | **RHD4-02-002-L08-(PT)-Gate Valves (Direct Buried)** | 2027-04-29 → 2027-04-28 (-1d) | 2027-05-06 → 2027-05-04 (-2d) |  |  |
| RHD4CZ5L08PT3100 | Installation for Direct Buried Gate Valves - (RD-L-8)-Z5-L08-PT | 2027-04-29 → 2027-04-28 (-1d) | 2027-05-03 → 2027-05-01 (-2d) |  | -153.02d → -152d |
| RHD4CZ5L08PT3200 | Stem and Service box for Direct Buried Gate Valves - (RD-L-8)-Z5-L08-PT | 2027-05-03 → 2027-05-02 (-1d) | 2027-05-06 → 2027-05-04 (-2d) |  | -152.02d → -149d |
| 4399 | **RHD4-02-002-L08-(PT)-Air Valve Chambers** | 2027-04-26 → 2027-04-25 (-1d) | 2027-05-05 → 2027-05-03 (-2d) |  |  |
| RHD4CZ5L08PT2102 | Excavation and Bedding for Air Valve Chambers for Potable Water Network - (RD-L-8)-Z5-L08-PT | 2027-04-26 → 2027-04-25 (-1d) | 2027-04-28 → 2027-04-26 (-2d) |  | -152.02d → -151d |
| RHD4CZ5L08PT2202 | PC works for Air Valve Chambers for Potable Water Network - (RD-L-8)-Z5-L08-PT | 2027-04-28 → 2027-04-27 (-1d) | 2027-05-01 → 2027-04-28 (-3d) |  | -152.02d → -151d |
| RHD4CZ5L08PT2302 | Installation for Air Valve Chambers for Potable Water Network - (RD-L-8)-Z5-L08-PT | 2027-05-01 → 2027-04-29 (-2d) | 2027-05-03 → 2027-05-01 (-2d) |  | -152.02d → -151d |
| RHD4CZ5L08PT2402 | Backfilling works for Air Valve Chambers for Potable Water Network - (RD-L-8)-Z5-L08-PT | 2027-05-03 → 2027-05-02 (-1d) | 2027-05-05 → 2027-05-03 (-2d) |  | -152.02d → -151d |
| 4400 | **RHD4-02-002-L08-(PT)-Air Valves** | 2027-05-03 → 2027-05-02 (-1d) | 2027-05-08 → 2027-05-05 (-3d) |  |  |
| RHD4CZ5L08PT3103 | Installation for Air Valves for Potable Water Network - (RD-L-8)-Z5-L08-PT | 2027-05-03 → 2027-05-02 (-1d) | 2027-05-05 → 2027-05-03 (-2d) |  | -152.02d → -151d |
| RHD4CZ5L08PT3203 | Stem and Service box for Air Valves for Potable Water Network - (RD-L-8)-Z5-L08-PT | 2027-05-05 → 2027-05-04 (-1d) | 2027-05-08 → 2027-05-05 (-3d) |  | -152.02d → -151d |
| 4401 | **RHD4-02-002-L08-(PT)-Fire Hydrant** | 2027-05-01 → 2027-04-29 (-2d) | 2027-05-27 → 2027-05-25 (-2d) |  |  |
| RHD4CZ5L08PT4100 | Excavation and Bedding and Pipe Installation for Fire Hydrant - (RD-L-8)-Z5-L08-PT | 2027-05-01 → 2027-04-29 (-2d) | 2027-05-06 → 2027-05-04 (-2d) |  | -167.02d → -166d |
| RHD4CZ5L08PT4200 | Valve Installation for Fire Hydrant - (RD-L-8)-Z5-L08-PT | 2027-05-06 → 2027-05-05 (-1d) | 2027-05-11 → 2027-05-09 (-2d) |  | -167.02d → -166d |
| RHD4CZ5L08PT4300 | Stem for Fire Hydrant - (RD-L-8)-Z5-L08-PT | 2027-05-11 → 2027-05-10 (-1d) | 2027-05-20 → 2027-05-13 (-7d) |  | -167.02d → -166d |
| RHD4CZ5L08PT4400 | Fire Installation for Fire Hydrant - (RD-L-8)-Z5-L08-PT | 2027-05-20 → 2027-05-19 (-1d) | 2027-05-25 → 2027-05-23 (-2d) |  | -167.02d → -166d |
| RHD4CZ5L08PT4500 | Protection Barriers for Fire Hydrant - (RD-L-8)-Z5-L08-PT | 2027-05-25 → 2027-05-24 (-1d) | 2027-05-27 → 2027-05-25 (-2d) |  | -167.02d → -166d |
| 4402 | **RHD4-02-002-L08-(PT)-Concrete Encasement** | 2027-05-04 → 2027-05-03 (-1d) | 2027-05-06 → 2027-05-04 (-2d) |  |  |
| RHD4CZ5L08PT5100 | Pipe Encasement for Potable Pipelines - (RD-L-8)-Z5-L08-PT | 2027-05-04 → 2027-05-03 (-1d) | 2027-05-06 → 2027-05-04 (-2d) |  | -156.02d → -155d |
| 4403 | **RHD4-02-002-Z5-L08-Irrigation Network - IRR** | 2027-05-01 → 2027-04-29 (-2d) | 2027-06-15 → 2027-06-13 (-2d) |  |  |

| ID | Task | Start | Finish | Total float |
| --- | --- | --- | --- | --- |
| 4404 | **RHD4-02-002-L08-(IRR)-HDPE Pipes - 160 mm diameter** | 2027-05-27 → 2027-05-26 (-1d) | 2027-06-08 → 2027-06-06 (-2d) |  |
| RHD4CZ5L08IRR1100 | Excavation works for HDPE Pipline 160 mm - (RD-L-8)-Z5-L08-IRR | 2027-05-27 → 2027-05-26 (-1d) | 2027-05-30 → 2027-05-27 (-3d) | -167.02d → -166d |
| RHD4CZ5L08IRR1200 | Bedding works for HDPE Pipline 160 mm - (RD-L-8)-Z5-L08-IRR | 2027-05-30 → 2027-05-29 (-1d) | 2027-06-01 → 2027-05-30 (-2d) | -167.02d → -166d |
| RHD4CZ5L08IRR1300 | Installing for HDPE Pipline 160 mm - (RD-L-8)-Z5-L08-IRR | 2027-06-01 → 2027-05-31 (-1d) | 2027-06-03 → 2027-06-01 (-2d) | -167.02d → -166d |
| RHD4CZ5L08IRR1400 | Primary Test for HDPE Pipline 160 mm - (RD-L-8)-Z5-L08-IRR | 2027-06-03 → 2027-06-02 (-1d) | 2027-06-06 → 2027-06-03 (-3d) | -156.02d → -155d |
| RHD4CZ5L08IRR1500 | Backfilling and warning tape works for HDPE Pipline 160 mm - (RD-L-8)-Z5-L08-IRR | 2027-06-06 → 2027-06-05 (-1d) | 2027-06-08 → 2027-06-06 (-2d) | -156.02d → -155d |
| 4412 | **RHD4-02-002-L08-(IRR)-Gate Valves (Direct Buried)** | 2027-06-01 → 2027-05-31 (-1d) | 2027-06-10 → 2027-06-08 (-2d) |  |
| RHD4CZ5L08IRR3100 | Installation for Direct Buried Gate Valves - (RD-L-8)-Z5-L08-IRR | 2027-06-01 → 2027-05-31 (-1d) | 2027-06-03 → 2027-06-01 (-2d) | -167.02d → -166d |
| RHD4CZ5L08IRR3200 | Stem and Service box for Direct Buried Gate Valves - (RD-L-8)-Z5-L08-IRR | 2027-06-08 → 2027-06-07 (-1d) | 2027-06-10 → 2027-06-08 (-2d) | -156.02d → -155d |
| 6685 | **RHD4-02-002-L08-(IRR)-Wash out Chamber** | 2027-06-03 → 2027-06-02 (-1d) | 2027-06-13 → 2027-06-10 (-3d) |  |
| RHD4CZ5L08IRR2101 | Excavation and Bedding for Wash out Chamber for Irrigation Network - (RD-L-8)-Z5-L08-IRR | 2027-06-03 → 2027-06-02 (-1d) | 2027-06-06 → 2027-06-03 (-3d) | -167.02d → -166d |
| RHD4CZ5L08IRR2201 | PC works for Wash out Chamber for Irrigation Network - (RD-L-8)-Z5-L08-IRR | 2027-06-06 → 2027-06-05 (-1d) | 2027-06-08 → 2027-06-06 (-2d) | -167.02d → -166d |
| RHD4CZ5L08IRR2301 | Installation for Wash out Chamber for Irrigation Network - (RD-L-8)-Z5-L08-IRR | 2027-06-08 → 2027-06-07 (-1d) | 2027-06-10 → 2027-06-08 (-2d) | -167.02d → -166d |
| RHD4CZ5L08IRR2401 | Backfilling works for Wash out Chamber for Irrigation Network - (RD-L-8)-Z5-L08-IRR | 2027-06-10 → 2027-06-09 (-1d) | 2027-06-13 → 2027-06-10 (-3d) | -167.02d → -166d |
| 6686 | **RHD4-02-002-L08-(IRR)-Wash out Valves** | 2027-06-10 → 2027-06-09 (-1d) | 2027-06-15 → 2027-06-13 (-2d) |  |
| RHD4CZ5L08IRR3102 | Installation for Wash out Valve for Irrigation Network - (RD-L-8)-Z5-L08-IRR | 2027-06-10 → 2027-06-09 (-1d) | 2027-06-13 → 2027-06-10 (-3d) | -167.02d → -166d |
| RHD4CZ5L08IRR3202 | Stem and Service box for Wash out Valve for Irrigation Network - (RD-L-8)-Z5-L08-IRR | 2027-06-13 → 2027-06-12 (-1d) | 2027-06-15 → 2027-06-13 (-2d) | -167.02d → -166d |
| 4406 | **RHD4-02-002-L08-(IRR)-HDPE Pipes - 200 mm diameter** | 2027-05-01 → 2027-04-29 (-2d) | 2027-06-10 → 2027-06-08 (-2d) |  |
| RHD4CZ5L08IRR1102 | Excavation works for HDPE Pipline 200 mm - (RD-L-8)-Z5-L08-IRR | 2027-05-01 → 2027-04-29 (-2d) | 2027-05-06 → 2027-05-04 (-2d) | -156.02d → -155d |
| RHD4CZ5L08IRR1202 | Bedding works for HDPE Pipline 200 mm - (RD-L-8)-Z5-L08-IRR | 2027-05-06 → 2027-05-05 (-1d) | 2027-05-11 → 2027-05-09 (-2d) | -156.02d → -155d |
| RHD4CZ5L08IRR1302 | Installing for HDPE Pipline 200 mm - (RD-L-8)-Z5-L08-IRR | 2027-05-11 → 2027-05-10 (-1d) | 2027-05-22 → 2027-05-19 (-3d) | -156.02d → -155d |
| RHD4CZ5L08IRR1402 | Primary Test for HDPE Pipline 200 mm - (RD-L-8)-Z5-L08-IRR | 2027-06-03 → 2027-06-02 (-1d) | 2027-06-06 → 2027-06-03 (-3d) | -156.02d → -155d |
| RHD4CZ5L08IRR1502 | Backfilling and warning tape works for HDPE Pipline 200 mm - (RD-L-8)-Z5-L08-IRR | 2027-06-06 → 2027-06-05 (-1d) | 2027-06-10 → 2027-06-08 (-2d) | -156.02d → -155d |
| 4437 | **RHD4-02-002-Z5-L08-Medium Voltage Network - MV** | 2027-08-04 → 2027-08-03 (-1d) | 2027-10-16 → 2027-10-14 (-2d) |  |
| 4438 | **RHD4-02-002-L08-(MV)-Medium Voltage cable trench** | 2027-08-04 → 2027-08-03 (-1d) | 2027-10-06 → 2027-10-05 (-1d) |  |
| RHD4CZ5L08MV1100 | Excavation for Medium Voltage Trench - (RD-L-8)-Z5-L08-MV | 2027-08-04 → 2027-08-03 (-1d) | 2027-08-21 → 2027-08-19 (-2d) | -153d → -152d |
| RHD4CZ5L08MV1200 | Trench Backfilling for Medium Voltage Network - (RD-L-8)-Z5-L08-MV | 2027-09-19 → 2027-09-18 (-1d) | 2027-10-06 → 2027-10-05 (-1d) | -153d → -152d |
| 4439 | **RHD4-02-002-L08-(MV)-Medium Voltage duct banks** | 2027-10-07 → 2027-10-06 (-1d) | 2027-10-16 → 2027-10-14 (-2d) |  |
| RHD4CZ5L08MV2100 | Excavation of Duct Banks for Medium Voltage Network - (RD-L-8)-Z5-L08-MV | 2027-10-07 → 2027-10-06 (-1d) | 2027-10-09 → 2027-10-07 (-2d) | -153d → -152d |
| RHD4CZ5L08MV2200 | Installation of Duct Banks for Medium Voltage Network - (RD-L-8)-Z5-L08-MV | 2027-10-10 → 2027-10-09 (-1d) | 2027-10-11 → 2027-10-10 (-1d) | -153d → -152d |
| RHD4CZ5L08MV2300 | Pouring of Duct Banks for Medium Voltage Network - (RD-L-8)-Z5-L08-MV | 2027-10-12 → 2027-10-11 (-1d) | 2027-10-13 → 2027-10-12 (-1d) | -153d → -152d |
| RHD4CZ5L08MV2400 | Backfilling of Duct Banks for Medium Voltage Network - (RD-L-8)-Z5-L08-MV | 2027-10-14 → 2027-10-13 (-1d) | 2027-10-16 → 2027-10-14 (-2d) | -153d → -152d |
| 4440 | **RHD4-02-002-L08-(MV)-Medium Voltage cables 3Cx 500 mm²** | 2027-08-22 → 2027-08-21 (-1d) | 2027-09-20 → 2027-09-19 (-1d) |  |
| RHD4CZ5L08MV3100 | Installation of Medium Voltage Cables 3Cx 500 mm² - (RD-L-8)-Z5-L08-MV | 2027-08-22 → 2027-08-21 (-1d) | 2027-09-08 → 2027-09-07 (-1d) | -153d → -152d |
| RHD4CZ5L08MV3200 | Joints Installation of Medium Voltage Cables 3Cx 500 mm² - (RD-L-8)-Z5-L08-MV | 2027-09-09 → 2027-09-08 (-1d) | 2027-09-12 → 2027-09-11 (-1d) | -153d → -152d |
| RHD4CZ5L08MV3300 | Testing of Medium Voltage Cables 3Cx 500 mm² - (RD-L-8)-Z5-L08-MV | 2027-09-13 → 2027-09-12 (-1d) | 2027-09-18 → 2027-09-16 (-2d) | -153d → -152d |
| RHD4CZ5L08MV3400 | Termination of Medium Voltage Cables 3Cx 500 mm² - (RD-L-8)-Z5-L08-MV | 2027-09-19 → 2027-09-18 (-1d) | 2027-09-20 → 2027-09-19 (-1d) | -134d → -133d |
| 4441 | **RHD4-02-002-L08-(MV)-Medium Voltage cables 3Cx 50 mm²** | 2027-09-21 → 2027-09-20 (-1d) | 2027-09-22 → 2027-09-21 (-1d) |  |
| RHD4CZ5L08MV3401 | Termination of Medium Voltage Cables 3Cx 50 mm² - (RD-L-8)-Z5-L08-MV | 2027-09-21 → 2027-09-20 (-1d) | 2027-09-22 → 2027-09-21 (-1d) | -134d → -133d |
| 4442 | **RHD4-02-002-L08-(MV)-Normally open Point (Outdoor Type)** | 2027-09-07 → 2027-09-06 (-1d) | 2027-09-11 → 2027-09-09 (-2d) |  |
| RHD4CZ5L08MV4100 | Installation for Normally open Point - (RD-L-8)-Z5-L08-MV | 2027-09-07 → 2027-09-06 (-1d) | 2027-09-08 → 2027-09-07 (-1d) | -124d → -123d |
| RHD4CZ5L08MV4200 | Termination for Normally open Point - (RD-L-8)-Z5-L08-MV | 2027-09-09 → 2027-09-08 (-1d) | 2027-09-11 → 2027-09-09 (-2d) | -124d → -123d |
| 4444 | **RHD4-02-002-Z5-L08-Low Voltage Network - LV** | 2027-06-15 → 2027-06-14 (-1d) | 2027-06-29 → 2027-06-27 (-2d) |  |
| 4447 | **RHD4-02-002-L08-(LV)-Low Voltage cables** | 2027-06-15 → 2027-06-14 (-1d) | 2027-06-29 → 2027-06-27 (-2d) |  |
| RHD4CZ5L08LV3100 | Excavation for Low Voltage Cables for Low Voltage Network - (RD-L-8)-Z5-L08-LV | 2027-06-15 → 2027-06-14 (-1d) | 2027-06-20 → 2027-06-17 (-3d) | -153.02d → -152d |
| RHD4CZ5L08LV3200 | Cable Laying of Low Voltage Cables for Low Voltage Network - (RD-L-8)-Z5-L08-LV | 2027-06-20 → 2027-06-19 (-1d) | 2027-06-23 → 2027-06-21 (-2d) | -138.02d → -137d |
| RHD4CZ5L08LV3300 | Warning tape and Backfill for Low Voltage Cables for Low Voltage Network - (RD-L-8)-Z5-L08-LV | 2027-06-23 → 2027-06-22 (-1d) | 2027-06-27 → 2027-06-24 (-3d) | -138.02d → -137d |
| RHD4CZ5L08LV3400 | Testing of Low Voltage Cables for Low Voltage Network - (RD-L-8)-Z5-L08-LV | 2027-06-27 → 2027-06-26 (-1d) | 2027-06-29 → 2027-06-27 (-2d) | -138.02d → -137d |
| 4259 | **RHD4-02-002-L08-(LV)-Low Voltage Distribution Pillars** | 2027-06-20 → 2027-06-19 (-1d) | 2027-06-27 → 2027-06-24 (-3d) |  |
| RHD4CZ5L08LV4100 | Leveling for Distribution Pillars for Low Voltage Network - (RD-L-8)-Z5-L08-LV | 2027-06-20 → 2027-06-19 (-1d) | 2027-06-22 → 2027-06-20 (-2d) | -136.02d → -135d |
| RHD4CZ5L08LV4200 | Lean Concrete for Distribution Pillars for Low Voltage Network - (RD-L-8)-Z5-L08-LV | 2027-06-22 → 2027-06-21 (-1d) | 2027-06-24 → 2027-06-22 (-2d) | -136.02d → -135d |
| RHD4CZ5L08LV4300 | Installation of Distribution Pillars for Low Voltage Network - (RD-L-8)-Z5-L08-LV | 2027-06-24 → 2027-06-23 (-1d) | 2027-06-27 → 2027-06-24 (-3d) | -136.02d → -135d |
| 4450 | **RHD4-02-002-Z5-L08-Street Lighting Network - SL** | 2027-06-20 → 2027-06-19 (-1d) | 2027-08-24 → 2027-08-22 (-2d) |  |
| 4451 | **RHD4-02-002-L08-(SL)-Street Lighting duct banks** | 2027-06-20 → 2027-06-19 (-1d) | 2027-06-29 → 2027-06-27 (-2d) |  |
| RHD4CZ5L08SL2100 | Excavation of Duct Banks for Street Lighting Network - (RD-L-8)-Z5-L08-SL | 2027-06-20 → 2027-06-19 (-1d) | 2027-06-22 → 2027-06-20 (-2d) | -138.02d → -137d |
| RHD4CZ5L08SL2200 | Installation of Duct Banks for Street Lighting Network - (RD-L-8)-Z5-L08-SL | 2027-06-22 → 2027-06-21 (-1d) | 2027-06-24 → 2027-06-22 (-2d) | -138.02d → -137d |
| RHD4CZ5L08SL2300 | Pouring of Duct Banks for Street Lighting Network - (RD-L-8)-Z5-L08-SL | 2027-06-24 → 2027-06-23 (-1d) | 2027-06-27 → 2027-06-24 (-3d) | -138.02d → -137d |
| RHD4CZ5L08SL2400 | Backfilling of Duct Banks for Street Lighting Network - (RD-L-8)-Z5-L08-SL | 2027-06-27 → 2027-06-26 (-1d) | 2027-06-29 → 2027-06-27 (-2d) | -138.02d → -137d |
| 4452 | **RHD4-02-002-L08-(SL)-Street Lighting Drawpit** | 2027-06-29 → 2027-06-28 (-1d) | 2027-07-04 → 2027-07-01 (-3d) |  |
| RHD4CZ5L08SL5100 | Excavation of Drawpit size 600x600x900mm for Street Lighting Network - (RD-L-8)-Z5-L08-SL | 2027-06-29 → 2027-06-28 (-1d) | 2027-07-01 → 2027-06-29 (-2d) | -138.02d → -137d |
| RHD4CZ5L08SL5200 | Installation of Drawpit size 600x600x900mm for Street Lighting Network - (RD-L-8)-Z5-L08-SL | 2027-07-01 → 2027-06-30 (-1d) | 2027-07-04 → 2027-07-01 (-3d) | -138.02d → -137d |
| 4453 | **RHD4-02-002-L08-(SL)-Street Lighting cables** | 2027-07-04 → 2027-07-03 (-1d) | 2027-07-31 → 2027-07-28 (-3d) |  |
| RHD4CZ5L08SL3100 | Excavation for Street Lighting Cables for Street Lighting Network - (RD-L-8)-Z5-L08-SL | 2027-07-04 → 2027-07-03 (-1d) | 2027-07-12 → 2027-07-10 (-2d) | -138.02d → -137d |
| RHD4CZ5L08SL3200 | Cable Laying of Street Lighting Cables for Street Lighting Network - (RD-L-8)-Z5-L08-SL | 2027-07-12 → 2027-07-11 (-1d) | 2027-07-19 → 2027-07-17 (-2d) | -138.02d → -137d |
| RHD4CZ5L08SL3300 | Warning tape and Backfill for Street Lighting Cables for Street Lighting Network - (RD-L-8)-Z5-L08-SL | 2027-07-19 → 2027-07-18 (-1d) | 2027-07-26 → 2027-07-24 (-2d) | -138.02d → -137d |
| RHD4CZ5L08SL3400 | Testing of Street Lighting Cables for Street Lighting Network - (RD-L-8)-Z5-L08-SL | 2027-07-26 → 2027-07-25 (-1d) | 2027-07-31 → 2027-07-28 (-3d) | -138.02d → -137d |
| 4454 | **RHD4-02-002-L08-(SL)-Street Lighting Poles** | 2027-07-31 → 2027-07-29 (-2d) | 2027-08-24 → 2027-08-22 (-2d) |  |
| RHD4CZ5L08SL1100 | Excavation for RC Base for Lighting Poles for Street Lighting Network - (RD-L-8)-Z5-L08-SL | 2027-07-31 → 2027-07-29 (-2d) | 2027-08-04 → 2027-08-02 (-2d) | -138.02d → -137d |
| RHD4CZ5L08SL1200 | Installation for RC Base for Lighting Poles for Street Lighting Network - (RD-L-8)-Z5-L08-SL | 2027-08-04 → 2027-08-03 (-1d) | 2027-08-09 → 2027-08-07 (-2d) | -138.02d → -137d |
| RHD4CZ5L08SL1300 | Backfill for RC Base for Lighting Poles for Street Lighting Network - (RD-L-8)-Z5-L08-SL | 2027-08-09 → 2027-08-08 (-1d) | 2027-08-14 → 2027-08-11 (-3d) | -138.02d → -137d |

| ID | Task | Start | Finish | Total float |
| --- | --- | --- | --- | --- |
| RHD4CZ5L08SL1400 | Installation for Lighting Poles for Street Lighting Network - (RD-L-8)-Z5-L08-SL | 2027-08-14 → 2027-08-12 (-2d) | 2027-08-19 → 2027-08-17 (-2d) | -138.02d → -137d |
| RHD4CZ5L08SL1500 | Luminaire Installation for Lighting Poles for Street Lighting Network - (RD-L-8)-Z5-L08-SL | 2027-08-19 → 2027-08-18 (-1d) | 2027-08-24 → 2027-08-22 (-2d) | -138.02d → -137d |
| 4462 | **RHD4-02-002-Z5-L08-Telecommunications Network - TC** | 2027-01-30 → 2027-01-31 (+1d) | 2027-10-02 → 2027-09-29 (-3d) |  |
| 4463 | **RHD4-02-002-L08-(TC)-Telecommunications Ducts** | 2027-08-24 → 2027-08-23 (-1d) | 2027-10-02 → 2027-09-29 (-3d) |  |
| RHD4CZ5L08TC2100 | Excavation of HDPE Ducts for Telecom Network - (RD-L-8)-Z5-L08-TC | 2027-08-24 → 2027-08-23 (-1d) | 2027-09-04 → 2027-09-01 (-3d) | -138.02d → -137d |
| RHD4CZ5L08TC2200 | Installation of HDPE Ducts for Telecom Network - (RD-L-8)-Z5-L08-TC | 2027-09-04 → 2027-09-02 (-2d) | 2027-09-20 → 2027-09-18 (-2d) | -138.02d → -137d |
| RHD4CZ5L08TC2400 | Backfilling of HDPE Ducts for Telecom Network - (RD-L-8)-Z5-L08-TC | 2027-09-20 → 2027-09-19 (-1d) | 2027-10-02 → 2027-09-29 (-3d) | -138.02d → -137d |
| 4464 | **RHD4-02-002-L08-(TC)-Telecommunications Manholes** | 2027-09-04 → 2027-09-02 (-2d) | 2027-09-15 → 2027-09-13 (-2d) |  |
| RHD4CZ5L08TC5100 | Excavation for Manholes for Telecom Network - (RD-L-8)-Z5-L08-TC | 2027-09-04 → 2027-09-02 (-2d) | 2027-09-09 → 2027-09-07 (-2d) | -134.02d → -133d |
| RHD4CZ5L08TC5200 | Installation of Manholes for Telecom Network - (RD-L-8)-Z5-L08-TC | 2027-09-09 → 2027-09-08 (-1d) | 2027-09-15 → 2027-09-13 (-2d) | -134.02d → -133d |
| 4465 | **RHD4-02-002-L08-(TC)-Telecomminications Road Crossings** | 2027-01-30 → 2027-01-31 (+1d) | 2027-02-08 → 2027-02-09 (+1d) |  |
| RHD4CZ5L08TC3100 | Excavation for Road Crossings for Telecom Network - (RD-L-8)-Z5-L08-TC | 2027-01-30 → 2027-01-31 (+1d) | 2027-01-31 → 2027-02-01 (+1d) | -169d → -170d |
| RHD4CZ5L08TC3200 | Installation of Road Crossings for Telecom Network - (RD-L-8)-Z5-L08-TC | 2027-02-01 → 2027-02-02 (+1d) | 2027-02-02 → 2027-02-03 (+1d) | -169d → -170d |
| RHD4CZ5L08TC3300 | Pouring of Road Crossings for Telecom Network - (RD-L-8)-Z5-L08-TC | 2027-02-03 → 2027-02-04 (+1d) | 2027-02-04 → 2027-02-06 (+2d) | -169d → -170d |
| RHD4CZ5L08TC3400 | Backfilling of Road Crossings for Telecom Network - (RD-L-8)-Z5-L08-TC | 2027-02-07 → 2027-02-08 (+1d) | 2027-02-08 → 2027-02-09 (+1d) | -170d → -171d |
| 4466 | **RHD4-02-002-Z5-L08-Information and Communication Technologies - ICT** | 2027-10-02 → 2027-09-30 (-2d) | 2027-11-10 → 2027-11-08 (-2d) |  |
| 4467 | **RHD4-02-002-L08-(ICT)-Information and Communication Technologies Ducts** | 2027-10-02 → 2027-09-30 (-2d) | 2027-11-10 → 2027-11-08 (-2d) |  |
| RHD4CZ5L08ICT2100 | Excavation of HDPE Ducts for ICT Network - (RD-L-8)-Z5-L08-ICT | 2027-10-02 → 2027-09-30 (-2d) | 2027-10-13 → 2027-10-11 (-2d) | -138.02d → -137d |
| RHD4CZ5L08ICT2200 | Installation of HDPE Ducts for ICT Network - (RD-L-8)-Z5-L08-ICT | 2027-10-13 → 2027-10-12 (-1d) | 2027-10-30 → 2027-10-27 (-3d) | -138.02d → -137d |
| RHD4CZ5L08ICT2400 | Backfilling of HDPE Ducts for ICT Network - (RD-L-8)-Z5-L08-ICT | 2027-10-30 → 2027-10-28 (-2d) | 2027-11-10 → 2027-11-08 (-2d) | -138.02d → -137d |
| 4468 | **RHD4-02-002-L08-(ICT)-Information and Communication Technologies Manholes** | 2027-10-13 → 2027-10-12 (-1d) | 2027-10-25 → 2027-10-23 (-2d) |  |
| RHD4CZ5L08ICT5100 | Excavation for Manholes for ICT Network - (RD-L-8)-Z5-L08-ICT | 2027-10-13 → 2027-10-12 (-1d) | 2027-10-19 → 2027-10-17 (-2d) | -134.02d → -133d |
| RHD4CZ5L08ICT5200 | Installation of Manholes for ICT Network - (RD-L-8)-Z5-L08-ICT | 2027-10-19 → 2027-10-18 (-1d) | 2027-10-25 → 2027-10-23 (-2d) | -134.02d → -133d |
| 3731 | **RHD4-02-002-Z5-L016** |  | 2028-03-13 → 2028-03-11 (-2d) |  |
| 3910 | **RHD4-02-002-Z5-L016-Road Works - RD** |  | 2028-03-13 → 2028-03-11 (-2d) |  |
| 3912 | **RHD4-02-002-L016-(RD)-Aggregate Base Course** | 2027-02-21 → 2027-02-10 (-11d) | 2027-02-27 → 2027-02-15 (-12d) |  |
| RHD4CZ5L016RD2100 | Supply, lay and compaction Aggregate base course compacted thickness 300 mmfor Roads - (RD-L-16)-Z5-L016-RD | 2027-02-21 → 2027-02-10 (-11d) | 2027-02-27 → 2027-02-15 (-12d) | -181d → -172d |
| 3913 | **RHD4-02-002-L016-(RD)-Bituminous base course Two Layers, including (MC1)&(RC2)** | 2027-02-28 → 2027-02-16 (-12d) | 2028-02-07 → 2028-02-05 (-2d) |  |
| RHD4CZ5L016RD3100 | Supply, lay and Asphaltic base course including Prime Coat (MC1) for 1st Layer - (RD-L-16)-Z5-L016-RD | 2027-02-28 → 2027-02-16 (-12d) | 2027-03-01 → 2027-02-17 (-12d) | -181d → -172d |
| RHD4CZ5L016RD3200 | Supply, lay and Asphaltic base course including Tack Coat (RC2) for 2nd Layer - (RD-L-16)-Z5-L016-RD | 2028-02-05 → 2028-02-03 (-2d) | 2028-02-07 → 2028-02-05 (-2d) | -115.02d → -114d |
| 3915 | **RHD4-02-002-L016-(RD)-Precast Concrete Curb** | 2028-02-07 → 2028-02-06 (-1d) | 2028-02-13 → 2028-02-10 (-3d) |  |
| RHD4CZ5L016RD5100 | Supply and installation Precast Concrete Kerb for Roads - (RD-L-16)-Z5-L016-RD | 2028-02-07 → 2028-02-06 (-1d) | 2028-02-13 → 2028-02-10 (-3d) | -115.02d → -114d |
| 3918 | **RHD4-02-002-L016-(RD)-Traffic Signage** | 2028-02-13 → 2028-02-12 (-1d) | 2028-02-20 → 2028-02-17 (-3d) |  |
| RHD4CZ5L016RD8100 | Installation of Traffic Signage for Road Network - (RD-L-16)-Z5-L016-RD | 2028-02-13 → 2028-02-12 (-1d) | 2028-02-20 → 2028-02-17 (-3d) | -115.02d → -114d |
| 3916 | **RHD4-02-002-L016-(RD)-Precast Interlocking Block Pavers** | 2028-02-20 → 2028-02-19 (-1d) | 2028-03-02 → 2028-02-26 (-5d) |  |
| RHD4CZ5L016RD6100 | Interlocking block pavers for sidewalk-footpath for Side walks and Parking areas - (RD-L-16)-Z5-L016-RD | 2028-02-20 → 2028-02-19 (-1d) | 2028-03-02 → 2028-02-26 (-5d) | -115.02d → -114d |
| 3914 | **RHD4-02-002-L016-(RD)-Bituminous concrete wearing course including tack coat (RC2)** | 2028-03-02 → 2028-03-01 (-1d) | 2028-03-05 → 2028-03-02 (-3d) |  |
| RHD4CZ5L016RD4100 | Supply, lay and compaction Asphaltic wearing course including tack Coat (RC2)for Road Network - (RD-L-16)-Z5-L016-RD | 2028-03-02 → 2028-03-01 (-1d) | 2028-03-05 → 2028-03-02 (-3d) | -115.02d → -114d |
| 3917 | **RHD4-02-002-L016-(RD)-Pavement Marking** | 2028-03-05 → 2028-03-04 (-1d) | 2028-03-13 → 2028-03-11 (-2d) |  |
| RHD4CZ5L016RD7100 | Pavement Markings for Road Network - (RD-L-16)-Z5-L016-RD | 2028-03-05 → 2028-03-04 (-1d) | 2028-03-13 → 2028-03-11 (-2d) | -115.02d → -114d |
| 3735 | **RHD4-02-002-Z5-L016-Storm Network - ST** |  | 2027-02-14 → 2027-02-10 (-4d) |  |
| 3754 | **RHD4-02-002-L016-(ST)-MH Works - 2000 mm diameter** |  | 2027-02-01 → 2027-02-02 (+1d) |  |
| RHD4CZ5L016ST3302 | MH Ring and C.Slab works and Backfilling works for MH 2000 mm - (RD-L-16)-Z5-L016-ST | 2027-01-26 → 2027-01-27 (+1d) | 2027-01-27 → 2027-01-28 (+1d) | -186d → -187d |
| RHD4CZ5L016ST3402 | Steel Cover for MH 2000 mm - (RD-L-16)-Z5-L016-ST | 2027-01-28 → 2027-01-30 (+2d) | 2027-01-30 → 2027-01-31 (+1d) | -186d → -187d |
| RHD4CZ5L016ST3502 | Finishing, Benching, Testing works for MH 2000 mm - (RD-L-16)-Z5-L016-ST | 2027-01-31 → 2027-02-01 (+1d) | 2027-02-01 → 2027-02-02 (+1d) | -186d → -187d |
| 1852 | **RHD4-02-002-L016-(ST)-GRP Pipes - 1200 mm diameter** | 2026-09-29 → 2026-10-01 (+2d) | 2027-02-07 → 2027-02-04 (-3d) |  |
| RHD4CZ5L016ST1108 | Excavation works for GRP Pipe Line 1200 mm - (RD-L-16)-Z5-L016-ST | 2026-09-29 A → 2026-10-01 A (+2d) |  |  |
| RHD4CZ5L016ST1208 | Bedding works for GRP Pipe Line 1200 mm - (RD-L-16)-Z5-L016-ST | 2026-09-30 A → 2026-11-02 A (+33d) |  |  |
| RHD4CZ5L016ST1408 | Primary Test for GRP Pipe Line 1200 mm - (RD-L-16)-Z5-L016-ST | 2027-02-02 → 2027-02-01 (-1d) | 2027-02-04 → 2027-02-02 (-2d) | -197.02d → -194d |
| RHD4CZ5L016ST1508 | Backfilling and warning tape works for GRP Pipe Line 1200 mm - (RD-L-16)-Z5-L016-ST | 2027-02-04 → 2027-02-03 (-1d) | 2027-02-07 → 2027-02-04 (-3d) | -197.02d → -194d |
| 1844 | **RHD4-02-002-L016-(ST)-GRP Pipes - 400 mm diameter** |  | 2027-02-07 → 2027-02-03 (-4d) |  |
| RHD4CZ5L016ST1400 | Primary Test for GRP Pipe Line 400 mm - (RD-L-16)-Z5-L016-ST | 2027-02-04 → 2027-02-02 (-2d) | 2027-02-07 → 2027-02-03 (-4d) | -180.02d → -178d |
| 1848 | **RHD4-02-002-L016-(ST)-GRP Pipes - 800 mm diameter** |  | 2027-02-04 → 2027-02-01 (-3d) |  |
| RHD4CZ5L016ST1404 | Primary Test for GRP Pipe Line 800 mm - (RD-L-16)-Z5-L016-ST | 2027-02-02 → 2027-01-31 (-2d) | 2027-02-04 → 2027-02-01 (-3d) | -180.02d → -178d |
| 2039 | **RHD4-02-002-L016-(ST)-GRP Pipes - 1000 mm diameter** |  | 2027-02-04 → 2027-02-01 (-3d) |  |
| RHD4CZ5L016ST1406 | Primary Test for GRP Pipe Line 1000 mm - (RD-L-16)-Z5-L016-ST | 2027-02-02 → 2027-01-31 (-2d) | 2027-02-04 → 2027-02-01 (-3d) | -178.02d → -176d |
| 2414 | **RHD4-02-002-L016-(ST)-GRP Pipes - 600 mm diameter** |  | 2027-02-04 → 2027-02-01 (-3d) |  |
| RHD4CZ5L016ST1402 | Primary Test for GRP Pipe Line 600 mm - (RD-L-16)-Z5-L016-ST | 2027-02-02 → 2027-01-31 (-2d) | 2027-02-04 → 2027-02-01 (-3d) | -158.02d → -156d |
| 6393 | **RHD4-02-002-L016-(ST)-GRP Pipes - 1300 mm diameter** | 2027-02-02 → 2027-01-31 (-2d) | 2027-02-14 → 2027-02-10 (-4d) |  |
| RHD4CZ5L016ST1109 | Excavation works for GRP Pipe Line 1300 mm - (RD-L-16)-Z5-L016-ST | 2027-02-02 → 2027-01-31 (-2d) | 2027-02-04 → 2027-02-01 (-3d) | -166.02d → -164d |
| RHD4CZ5L016ST1209 | Bedding works for GRP Pipe Line 1300 mm - (RD-L-16)-Z5-L016-ST | 2027-02-04 → 2027-02-02 (-2d) | 2027-02-07 → 2027-02-03 (-4d) | -166.02d → -164d |
| RHD4CZ5L016ST1309 | Installing for GRP Pipe Line 1300 mm - (RD-L-16)-Z5-L016-ST | 2027-02-07 → 2027-02-04 (-3d) | 2027-02-09 → 2027-02-06 (-3d) | -166.02d → -164d |
| RHD4CZ5L016ST1409 | Primary Test for GRP Pipe Line 1300 mm - (RD-L-16)-Z5-L016-ST | 2027-02-09 → 2027-02-07 (-2d) | 2027-02-11 → 2027-02-08 (-3d) | -166.02d → -164d |
| RHD4CZ5L016ST1509 | Backfilling and warning tape works for GRP Pipe Line 1300 mm - (RD-L-16)-Z5-L016-ST | 2027-02-11 → 2027-02-09 (-2d) | 2027-02-14 → 2027-02-10 (-4d) | -166.02d → -164d |
| 3753 | **RHD4-02-002-L016-(ST)-MH Works - 1500 mm diameter** |  | 2027-02-03 → 2027-02-04 (+1d) |  |
| RHD4CZ5L016ST3301 | MH Ring and C.Slab works and Backfilling works for MH 1500 mm - (RD-L-16)-Z5-L016-ST |  | 2027-01-27 → 2027-01-28 (+1d) | -184d → -185d |
| RHD4CZ5L016ST3401 | Steel Cover for MH 1500 mm - (RD-L-16)-Z5-L016-ST | 2027-01-31 → 2027-02-01 (+1d) | 2027-02-01 → 2027-02-02 (+1d) | -186d → -187d |
| RHD4CZ5L016ST3501 | Finishing, Benching, Testing works for MH 1500 mm - (RD-L-16)-Z5-L016-ST | 2027-02-02 → 2027-02-03 (+1d) | 2027-02-03 → 2027-02-04 (+1d) | -186d → -187d |
| 3752 | **RHD4-02-002-L016-(ST)-MH Works - 1200 mm diameter** |  | 2027-02-06 → 2027-02-07 (+1d) |  |
| RHD4CZ5L016ST3200 | Installation of Base for MH 1200 mm - (RD-L-16)-Z5-L016-ST | 2027-01-26 → 2027-01-27 (+1d) | 2027-01-27 → 2027-01-28 (+1d) | -152d → -153d |

| ID | Task | Start | Finish | Complete | Total float |
| --- | --- | --- | --- | --- | --- |
| RHD4CZ5L016ST3300 | MH Ring and C.Slab works and Backfilling works for MH 1200 mm - (RD-L-16)-Z5-L016-ST | 2027-01-28 → 2027-01-30 (+2d) | 2027-01-30 → 2027-01-31 (+1d) |  | -152d → -153d |
| RHD4CZ5L016ST3400 | Steel Cover for MH 1200 mm - (RD-L-16)-Z5-L016-ST | 2027-02-02 → 2027-02-03 (+1d) | 2027-02-03 → 2027-02-04 (+1d) |  | -154d → -155d |
| RHD4CZ5L016ST3500 | Finishing, Benching, Testing works for MH 1200 mm - (RD-L-16)-Z5-L016-ST | 2027-02-04 → 2027-02-06 (+2d) | 2027-02-06 → 2027-02-07 (+1d) |  | -154d → -155d |
| 3739 | **RHD4-02-002-L016-(ST)-GRP Pipes - 700 mm diameter** |  | 2027-02-02 → 2027-02-03 (+1d) |  |  |
| RHD4CZ5L016ST1103 | Excavation works for GRP Pipe Line 700 mm - (RD-L-16)-Z5-L016-ST |  | 2027-01-27 → 2027-01-28 (+1d) |  | -192d → -189d |
| RHD4CZ5L016ST1203 | Bedding works for GRP Pipe Line 700 mm - (RD-L-16)-Z5-L016-ST |  | 2027-01-28 → 2027-01-30 (+2d) |  | -192d → -188d |
| RHD4CZ5L016ST1303 | Installing for GRP Pipe Line 700 mm - (RD-L-16)-Z5-L016-ST |  | 2027-01-30 → 2027-01-31 (+1d) |  | -192d → -188d |
| RHD4CZ5L016ST1503 | Backfilling and warning tape works for GRP Pipe Line 700 mm - (RD-L-16)-Z5-L016-ST |  | 2027-02-02 → 2027-02-03 (+1d) |  | -192d → -188d |
| RHD4CZ5L016ST1403 | Primary Test for GRP Pipe Line 700 mm - (RD-L-16)-Z5-L016-ST | 2027-01-31 → 2027-02-01 (+1d) | 2027-02-01 → 2027-02-02 (+1d) |  | -192d → -188d |
| 3750 | **RHD4-02-002-L016-(ST)-UPVC Pipes - 300 mm diameter** |  | 2027-02-06 → 2027-02-07 (+1d) |  |  |
| RHD4CZ5L016ST2100 | Excavation works for UPVC Pipe Line 300 mm - (RD-L-16)-Z5-L016-ST |  | 2027-01-28 → 2027-01-30 (+2d) |  | -188d → -189d |
| RHD4CZ5L016ST2200 | Bedding works for UPVC Pipe Line 300 mm - (RD-L-16)-Z5-L016-ST |  | 2027-01-30 → 2027-01-31 (+1d) |  | -188d → -189d |
| RHD4CZ5L016ST2300 | Installing for UPVC Pipe Line 300 mm - (RD-L-16)-Z5-L016-ST |  | 2027-02-01 → 2027-02-02 (+1d) |  | -188d → -189d |
| RHD4CZ5L016ST2500 | Backfilling and warning tape works for UPVC Pipe Line 300 mm - (RD-L-16)-Z5-L016-ST |  | 2027-02-06 → 2027-02-07 (+1d) |  | -188d → -189d |
| RHD4CZ5L016ST2400 | Primary Test for UPVC Pipe Line 300 mm - (RD-L-16)-Z5-L016-ST | 2027-02-02 → 2027-02-03 (+1d) | 2027-02-03 → 2027-02-04 (+1d) |  | -188d → -189d |
| 3758 | **RHD4-02-002-L016-(ST)-Concrete Encasement** | 2027-01-31 → 2027-02-01 (+1d) | 2027-02-01 → 2027-02-02 (+1d) |  |  |
| RHD4CZ5L016ST6100 | Pipe Encasement for Storm Pipelines - (RD-L-16)-Z5-L016-ST | 2027-01-31 → 2027-02-01 (+1d) | 2027-02-01 → 2027-02-02 (+1d) |  | -186d → -187d |
| 6409 | **RHD4-02-002-L016-(ST)-Double Catch Basin Works** |  | 2027-02-04 → 2027-02-06 (+2d) |  |  |
| RHD4CZ5L016ST8300 | Rings & C.Slab & Final Backfillfor Double Catch Basin - (RD-L-16)-Z5-L016-ST | 2027-01-30 → 2027-01-31 (+1d) | 2027-01-31 → 2027-02-01 (+1d) |  | -185d → -186d |
| RHD4CZ5L016ST8400 | Steel Cover for Double Catch Basin - (RD-L-16)-Z5-L016-ST | 2027-02-01 → 2027-02-02 (+1d) | 2027-02-02 → 2027-02-03 (+1d) |  | -185d → -186d |
| RHD4CZ5L016ST8500 | Finishing and Insulation works for Double Catch Basin - (RD-L-16)-Z5-L016-ST | 2027-02-03 → 2027-02-04 (+1d) | 2027-02-04 → 2027-02-06 (+2d) |  | -185d → -186d |
| RHD4CZ5L016ST7300 | Rings & C.Slab & Final Backfill for Single Catch Basin - (RD-L-16)-Z5-L016-ST |  | 2027-02-01 → 2027-02-02 (+1d) |  | -152d → -153d |
| RHD4CZ5L016ST7400 | Steel Cover for Single Catch Basin - (RD-L-16)-Z5-L016-ST | 2027-02-04 → 2027-02-06 (+2d) | 2027-02-06 → 2027-02-07 (+1d) |  | -154d → -155d |
| RHD4CZ5L016ST7500 | Finishing and Insulation works for Single Catch Basin - (RD-L-16)-Z5-L016-ST | 2027-02-07 → 2027-02-08 (+1d) |  |  | -154.02d → -155d |
| 4299 | **RHD4-02-002-Z5-L016-Concrete Box Culvert - ST** |  | 2027-01-30 → 2027-02-06 (+7d) |  |  |
| 4300 | **RHD4-02-002-L016-(ST)-Concrete Box Culvert** |  | 2027-01-30 → 2027-02-06 (+7d) |  |  |
| RHD4CZ5L016ST4700 | Backfilling works for Box Culvert - (RD-L-16)-Z5-C016-ST | 2027-01-26 → 2027-02-02 (+7d) | 2027-01-30 → 2027-02-06 (+7d) |  | -154d → -160d |
| 4301 | **RHD4-02-002-L016-(ST)-Concrete Chambers** | 2026-08-20 → 2027-01-26 (+159d) | 2027-01-27 → 2027-02-03 (+7d) |  |  |
| RHD4CZ5L016ST5100 | Excavation and Bedding for Concrete Chambers - for Box Culvert - (RD-L-16)-Z5-C016-ST | 2026-08-20 A → 2027-01-26 (+159d) | 2027-01-20 → 2027-01-27 (+7d) | 50% → 0% | -154d → -160d |
| RHD4CZ5L016ST5200 | PC works for Concrete Chambers - for Box Culvert - (RD-L-16)-Z5-C016-ST | 2026-08-25 A → 2027-01-28 (+156d) | 2027-01-23 → 2027-01-30 (+7d) | 50% → 0% | -154d → -160d |
| RHD4CZ5L016ST5300 | Installation for Concrete Chambers - for Box Culvert - (RD-L-16)-Z5-C016-ST | 2026-08-30 A → 2027-01-31 (+154d) | 2027-01-25 → 2027-02-01 (+7d) | 50% → 0% | -154d → -160d |
| RHD4CZ5L016ST5400 | Backfilling works for Concrete Chambers - for Box Culvert - (RD-L-16)-Z5-C016-ST | 2027-01-26 → 2027-02-02 (+7d) | 2027-01-27 → 2027-02-03 (+7d) |  | -152d → -158d |
| 3784 | **RHD4-02-002-Z5-L016-Sewage Network - SW** |  | 2027-06-01 → 2027-06-02 (+1d) |  |  |
| 1 | **Missing ID** | 2027-04-12 → 2027-04-13 (+1d) | 2027-04-23 → 2027-04-24 (+1d) |  |  |
| RHD4CZ5L016SW4101 | Excavation and Bedding for Air Valve Chamber for HDPE force Main - (RD-L-16)-Z5-L016-SW | 2027-04-12 → 2027-04-13 (+1d) | 2027-04-13 → 2027-04-14 (+1d) |  | -175d → -176d |
| RHD4CZ5L016SW4201 | PC works for Air Valve Chamber for HDPE force Main - (RD-L-16)-Z5-L016-SW | 2027-04-14 → 2027-04-15 (+1d) | 2027-04-15 → 2027-04-16 (+1d) |  | -175d → -176d |
| RHD4CZ5L016SW4301 | Installation for Air Valve Chamber for HDPE force Main - (RD-L-16)-Z5-L016-SW | 2027-04-16 → 2027-04-17 (+1d) | 2027-04-17 → 2027-04-18 (+1d) |  | -175d → -176d |
| RHD4CZ5L016SW4401 | Backfilling works for Air Valve Chamber for HDPE force Main - (RD-L-16)-Z5-L016-SW | 2027-04-18 → 2027-04-19 (+1d) | 2027-04-19 → 2027-04-20 (+1d) |  | -175d → -176d |
| RHD4CZ5L016SW5101 | Installation for Air Valves for HDPE force Main - (RD-L-16)-Z5-L016-SW | 2027-04-20 → 2027-04-21 (+1d) | 2027-04-21 → 2027-04-22 (+1d) |  | -175d → -176d |
| RHD4CZ5L016SW5201 | Stem and Service box for Air Valves for HDPE force Main - (RD-L-16)-Z5-L016-SW | 2027-04-22 → 2027-04-23 (+1d) | 2027-04-23 → 2027-04-24 (+1d) |  | -175d → -176d |
| 957 | **RHD4-02-002-L016-(SW)-MH Works - 1200 mm diameter with Back drop** |  | 2027-04-18 → 2027-04-19 (+1d) |  |  |
| RHD4CZ5L016SW3301 | MH Ring and C.Slab works and Backfilling works for MH 1200 mm - (RD-L-16)-Z5-L016-SW | 2027-04-12 → 2027-04-13 (+1d) | 2027-04-13 → 2027-04-14 (+1d) |  | -177d → -176d |
| RHD4CZ5L016SW3401 | Steel Cover for MH 1200 mm - (RD-L-16)-Z5-L016-SW | 2027-04-14 → 2027-04-15 (+1d) | 2027-04-15 → 2027-04-17 (+2d) |  | -177d → -176d |
| RHD4CZ5L016SW3501 | Finishing, Benching, Testing works for MH 1200 mm - (RD-L-16)-Z5-L016-SW | 2027-04-17 → 2027-04-18 (+1d) | 2027-04-18 → 2027-04-19 (+1d) |  | -177d → -176d |
| 4358 | **RHD4-02-002-L016-(SW)-HDPE Pipes - 250 mm diameter** | 2027-04-12 → 2027-04-13 (+1d) | 2027-04-22 → 2027-04-24 (+2d) |  |  |
| RHD4CZ5L016SW2600 | Excavation works for HDPE Force Main Pipeline 250 mm - (RD-L-16)-Z5-L016-SW | 2027-04-12 → 2027-04-13 (+1d) | 2027-04-13 → 2027-04-14 (+1d) |  | -179d → -178d |
| RHD4CZ5L016SW2700 | Bedding works for HDPE Force Main Pipeline 250 mm - (RD-L-16)-Z5-L016-SW | 2027-04-14 → 2027-04-15 (+1d) | 2027-04-15 → 2027-04-17 (+2d) |  | -179d → -178d |
| RHD4CZ5L016SW2800 | Installing for HDPE Force Main Pipeline 250 mm - (RD-L-16)-Z5-L016-SW | 2027-04-17 → 2027-04-18 (+1d) | 2027-04-18 → 2027-04-19 (+1d) |  | -179d → -178d |
| RHD4CZ5L016SW2900 | Primary Test for HDPE Force Main Pipeline 250 mm - (RD-L-16)-Z5-L016-SW | 2027-04-19 → 2027-04-20 (+1d) | 2027-04-20 → 2027-04-21 (+1d) |  | -179d → -178d |
| RHD4CZ5L016SW3000 | Backfilling and warning tape works for HDPE Force Main Pipeline 250 mm - (RD-L-16)-Z5-L016-SW | 2027-04-21 → 2027-04-22 (+1d) | 2027-04-22 → 2027-04-24 (+2d) |  | -179d → -178d |
| 3794 | **RHD4-02-002-L016-(SW)-MH Works - 1200 mm diameter** |  | 2027-06-01 → 2027-06-02 (+1d) |  |  |
| RHD4CZ5L016SW3100 | Excavation and PC Blinding works for MH 1200 mm - (RD-L-16)-Z5-L016-SW |  | 2027-04-15 → 2027-04-17 (+2d) |  | -162d → -161d |
| RHD4CZ5L016SW3200 | Installation of Base for MH 1200 mm - (RD-L-16)-Z5-L016-SW |  | 2027-04-22 → 2027-04-24 (+2d) |  | -162d → -161d |
| RHD4CZ5L016SW3300 | MH Ring and C.Slab works and Backfilling works for MH 1200 mm - (RD-L-16)-Z5-L016-SW | 2027-04-24 → 2027-04-25 (+1d) | 2027-05-06 → 2027-05-08 (+2d) |  | -162d → -161d |
| RHD4CZ5L016SW3400 | Steel Cover for MH 1200 mm - (RD-L-16)-Z5-L016-SW | 2027-05-08 → 2027-05-09 (+1d) | 2027-05-13 → 2027-05-19 (+6d) |  | -159d → -160d |
| RHD4CZ5L016SW3500 | Finishing, Benching, Testing works for MH 1200 mm - (RD-L-16)-Z5-L016-SW | 2027-05-19 → 2027-05-20 (+1d) | 2027-06-01 → 2027-06-02 (+1d) |  | -159d → -160d |
| 3785 | **RHD4-02-002-L016-(SW)-GRP Pipes - 300 mm diameter** | 2027-04-24 → 2027-04-25 (+1d) | 2027-05-22 → 2027-05-23 (+1d) |  |  |
| RHD4CZ5L016SW1100 | Excavation works for GRP Pipe Line 300 mm - (RD-L-16)-Z5-L016-SW | 2027-04-24 → 2027-04-25 (+1d) | 2027-04-25 → 2027-04-26 (+1d) |  | -154d → -153d |
| RHD4CZ5L016SW1200 | Bedding works for GRP Pipe Line 300 mm - (RD-L-16)-Z5-L016-SW | 2027-04-26 → 2027-04-27 (+1d) | 2027-04-27 → 2027-04-28 (+1d) |  | -154d → -153d |
| RHD4CZ5L016SW1300 | Installing for GRP Pipe Line 300 mm - (RD-L-16)-Z5-L016-SW | 2027-05-08 → 2027-05-09 (+1d) | 2027-05-09 → 2027-05-10 (+1d) |  | -162d → -161d |
| RHD4CZ5L016SW1400 | Primary Test for GRP Pipe Line 300 mm - (RD-L-16)-Z5-L016-SW | 2027-05-10 → 2027-05-11 (+1d) | 2027-05-11 → 2027-05-12 (+1d) |  | -162d → -161d |
| RHD4CZ5L016SW1500 | Backfilling and warning tape works for GRP Pipe Line 300 mm - (RD-L-16)-Z5-L016-SW | 2027-05-12 → 2027-05-13 (+1d) | 2027-05-22 → 2027-05-23 (+1d) |  | -162d → -161d |
| 3790 | **RHD4-02-002-L016-(SW)-UPVC Pipes - 200 mm diameter** |  | 2027-05-19 → 2027-05-20 (+1d) |  |  |
| RHD4CZ5L016SW2400 | Primary Test for UPVC Pipe Line 200 mm - (RD-L-16)-Z5-L016-SW |  | 2027-05-19 → 2027-05-20 (+1d) |  | -160d → -159d |
| 3821 | **RHD4-02-002-Z5-L016-Potable Network - PT** |  | 2027-07-14 → 2027-07-12 (-2d) |  |  |
| 3824 | **RHD4-02-002-L016-(PT)-HDPE Pipes - 200 mm diameter** | 2027-05-23 → 2026-10-31 (-204d) | 2027-06-06 → 2027-05-25 (-12d) |  |  |
| RHD4CZ5L016PT1102 | Excavation works for HDPE Pipline 200 mm - (RD-L-16)-Z5-L016-PT | 2027-05-23 → 2026-10-31 A (-204d) | 2027-05-25 → 2026-11-01 A (-205d) | 0% → 100% | -162.02d → none |
| RHD4CZ5L016PT1202 | Bedding works for HDPE Pipline 200 mm - (RD-L-16)-Z5-L016-PT | 2027-05-25 → 2026-11-02 A (-204d) | 2027-05-27 → 2026-11-03 A (-205d) | 0% → 100% | -162.02d → none |
| RHD4CZ5L016PT1302 | Installing for HDPE Pipline 200 mm - (RD-L-16)-Z5-L016-PT | 2027-05-27 → 2026-11-03 A (-205d) | 2027-06-01 → 2026-11-04 A (-209d) | 0% → 100% | -162.02d → none |
| RHD4CZ5L016PT1502 | Backfilling and warning tape works for HDPE Pipline 200 mm - (RD-L-16)-Z5-L016-PT | 2027-06-03 → 2026-11-04 A (-211d) | 2027-06-06 → 2026-11-05 A (-213d) | 0% → 100% | -150.02d → none |

| ID | Task | Start | Finish | Complete | Total float |
| --- | --- | --- | --- | --- | --- |
| RHD4CZ5L016PT1402 | Primary Test for HDPE Pipline 200 mm - (RD-L-16)-Z5-L016-PT | 2027-06-01 → 2027-05-24 (-8d) | 2027-06-03 → 2027-05-25 (-9d) |  | -150.02d → -143d |
| 3823 | **RHD4-02-002-L016-(PT)-HDPE Pipes - 160 mm diameter** | 2027-05-25 → 2026-10-31 (-206d) | 2027-06-24 → 2027-06-22 (-2d) |  |  |
| RHD4CZ5L016PT1101 | Excavation works for HDPE Pipline 160 mm - (RD-L-16)-Z5-L016-PT | 2027-05-25 → 2026-10-31 A (-206d) | 2027-05-29 → 2027-05-26 (-3d) | 0% → 4% | -162.02d → -161d |
| RHD4CZ5L016PT1201 | Bedding works for HDPE Pipline 160 mm - (RD-L-16)-Z5-L016-PT | 2027-05-29 → 2026-11-02 A (-208d) | 2027-06-01 → 2027-05-30 (-2d) | 0% → 4% | -162.02d → -161d |
| RHD4CZ5L016PT1301 | Installing for HDPE Pipline 160 mm - (RD-L-16)-Z5-L016-PT | 2027-06-01 → 2026-11-03 A (-210d) | 2027-06-07 → 2027-06-05 (-2d) | 0% → 4% | -162.02d → -161d |
| RHD4CZ5L016PT1501 | Backfilling and warning tape works for HDPE Pipline 160 mm - (RD-L-16)-Z5-L016-PT | 2027-06-20 → 2026-11-04 A (-228d) | 2027-06-24 → 2027-06-22 (-2d) | 0% → 4% | -162.02d → -161d |
| RHD4CZ5L016PT1401 | Primary Test for HDPE Pipline 160 mm - (RD-L-16)-Z5-L016-PT | 2027-06-17 → 2027-06-16 (-1d) | 2027-06-20 → 2027-06-17 (-3d) |  | -162.02d → -161d |
| 3822 | **RHD4-02-002-L016-(PT)-HDPE Pipes - 110 mm diameter** |  | 2027-06-27 → 2027-06-24 (-3d) |  |  |
| RHD4CZ5L016PT1100 | Excavation works for HDPE Pipline 110 mm - (RD-L-16)-Z5-L016-PT |  | 2027-05-31 → 2027-05-29 (-2d) |  | -162.02d → -161d |
| RHD4CZ5L016PT1200 | Bedding works for HDPE Pipline 110 mm - (RD-L-16)-Z5-L016-PT |  | 2027-06-03 → 2027-06-01 (-2d) |  | -159.02d → -158d |
| RHD4CZ5L016PT1300 | Installing for HDPE Pipline 110 mm - (RD-L-16)-Z5-L016-PT |  | 2027-06-09 → 2027-06-07 (-2d) |  | -162.02d → -161d |
| RHD4CZ5L016PT1400 | Primary Test for HDPE Pipline 110 mm - (RD-L-16)-Z5-L016-PT | 2027-06-20 → 2027-06-19 (-1d) | 2027-06-24 → 2027-06-22 (-2d) |  | -162.02d → -161d |
| RHD4CZ5L016PT1500 | Backfilling and warning tape works for HDPE Pipline 110 mm - (RD-L-16)-Z5-L016-PT | 2027-06-24 → 2027-06-23 (-1d) | 2027-06-27 → 2027-06-24 (-3d) |  | -162.02d → -161d |
| 3827 | **RHD4-02-002-L016-(PT)-Gate Valves (Direct Buried)** | 2027-06-07 → 2027-06-06 (-1d) | 2027-06-30 → 2027-06-28 (-2d) |  |  |
| RHD4CZ5L016PT3100 | Installation for Direct Buried Gate Valves - (RD-L-16)-Z5-L016-PT | 2027-06-07 → 2027-06-06 (-1d) | 2027-06-10 → 2027-06-08 (-2d) |  | -148.02d → -147d |
| RHD4CZ5L016PT3200 | Stem and Service box for Direct Buried Gate Valves - (RD-L-16)-Z5-L016-PT | 2027-06-27 → 2027-06-26 (-1d) | 2027-06-30 → 2027-06-28 (-2d) |  | -162.02d → -161d |
| 3830 | **RHD4-02-002-L016-(PT)-Wash out Valve Chambers** | 2027-06-06 → 2027-05-26 (-11d) | 2027-07-07 → 2027-07-05 (-2d) |  |  |
| RHD4CZ5L016PT2101 | Excavation and Bedding for Wash out Valve Chambers for Potable Water Network - (RD-L-16)-Z5-L016-PT | 2027-06-06 → 2027-05-26 (-11d) | 2027-06-08 → 2027-05-27 (-12d) |  | -143.02d → -134d |
| RHD4CZ5L016PT2201 | PC works for Wash out Valve Chambers for Potable Water Network - (RD-L-16)-Z5-L016-PT | 2027-06-30 → 2027-06-29 (-1d) | 2027-07-03 → 2027-06-30 (-3d) |  | -162.02d → -161d |
| RHD4CZ5L016PT2301 | Installation for Wash out Valve Chambers for Potable Water Network - (RD-L-16)-Z5-L016-PT | 2027-07-03 → 2027-07-01 (-2d) | 2027-07-05 → 2027-07-03 (-2d) |  | -162.02d → -161d |
| RHD4CZ5L016PT2401 | Backfilling works for Wash out Valve Chambers for Potable Water Network - (RD-L-16)-Z5-L016-PT | 2027-07-05 → 2027-07-04 (-1d) | 2027-07-07 → 2027-07-05 (-2d) |  | -162.02d → -161d |
| 3831 | **RHD4-02-002-L016-(PT)-Wash out Valves** | 2027-06-08 → 2027-05-29 (-10d) | 2027-07-10 → 2027-07-07 (-3d) |  |  |
| RHD4CZ5L016PT3102 | Installation for Wash out Valves for Potable Water Network - (RD-L-16)-Z5-L016-PT | 2027-06-08 → 2027-05-29 (-10d) | 2027-06-10 → 2027-05-30 (-11d) |  | -139.02d → -130d |
| RHD4CZ5L016PT3202 | Stem and Service box for Wash out Valves for Potable Water Network - (RD-L-16)-Z5-L016-PT | 2027-07-07 → 2027-07-06 (-1d) | 2027-07-10 → 2027-07-07 (-3d) |  | -162.02d → -161d |
| 3834 | **RHD4-02-002-L016-(PT)-Fire Hydrant** | 2027-06-27 → 2027-06-26 (-1d) | 2027-07-14 → 2027-07-12 (-2d) |  |  |
| RHD4CZ5L016PT4100 | Excavation and Bedding and Pipe Installation for Fire Hydrant - (RD-L-16)-Z5-L016-PT | 2027-06-27 → 2027-06-26 (-1d) | 2027-07-01 → 2027-06-29 (-2d) |  | -157.02d → -156d |
| RHD4CZ5L016PT4200 | Valve Installation for Fire Hydrant - (RD-L-16)-Z5-L016-PT | 2027-07-01 → 2027-06-30 (-1d) | 2027-07-05 → 2027-07-03 (-2d) |  | -157.02d → -156d |
| RHD4CZ5L016PT4300 | Stem for Fire Hydrant - (RD-L-16)-Z5-L016-PT | 2027-07-05 → 2027-07-04 (-1d) | 2027-07-08 → 2027-07-06 (-2d) |  | -157.02d → -156d |
| RHD4CZ5L016PT4400 | Fire Installation for Fire Hydrant - (RD-L-16)-Z5-L016-PT | 2027-07-08 → 2027-07-07 (-1d) | 2027-07-12 → 2027-07-10 (-2d) |  | -157.02d → -156d |
| RHD4CZ5L016PT4500 | Protection Barriers for Fire Hydrant - (RD-L-16)-Z5-L016-PT | 2027-07-12 → 2027-07-11 (-1d) | 2027-07-14 → 2027-07-12 (-2d) |  | -157.02d → -156d |
| 3835 | **RHD4-02-002-L016-(PT)-Concrete Encasement** | 2027-06-07 → 2027-06-06 (-1d) | 2027-06-17 → 2027-06-15 (-2d) |  |  |
| RHD4CZ5L016PT5100 | Pipe Encasement for Potable Pipelines - (RD-L-16)-Z5-L016-PT | 2027-06-07 → 2027-06-06 (-1d) | 2027-06-17 → 2027-06-15 (-2d) |  | -162.02d → -161d |
| 3836 | **RHD4-02-002-Z5-L016-Irrigation Network - IRR** |  | 2027-07-10 → 2027-07-07 (-3d) |  |  |
| 3839 | **RHD4-02-002-L016-(IRR)-HDPE Pipes - 200 mm diameter** | 2027-05-29 → 2027-05-27 (-2d) | 2027-06-16 → 2027-06-14 (-2d) |  |  |
| RHD4CZ5L016IRR1102 | Excavation works for HDPE Pipline 200 mm - (RD-L-16)-Z5-L016-IRR | 2027-05-29 → 2027-05-27 (-2d) | 2027-06-02 → 2027-05-31 (-2d) |  | -162.02d → -161d |
| RHD4CZ5L016IRR1202 | Bedding works for HDPE Pipline 200 mm - (RD-L-16)-Z5-L016-IRR | 2027-06-02 → 2027-06-01 (-1d) | 2027-06-06 → 2027-06-03 (-3d) |  | -162.02d → -161d |
| RHD4CZ5L016IRR1302 | Installing for HDPE Pipline 200 mm - (RD-L-16)-Z5-L016-IRR | 2027-06-06 → 2027-06-05 (-1d) | 2027-06-10 → 2027-06-08 (-2d) |  | -162.02d → -161d |
| RHD4CZ5L016IRR1402 | Primary Test for HDPE Pipline 200 mm - (RD-L-16)-Z5-L016-IRR | 2027-06-10 → 2027-06-09 (-1d) | 2027-06-13 → 2027-06-10 (-3d) |  | -162.02d → -161d |
| RHD4CZ5L016IRR1502 | Backfilling and warning tape works for HDPE Pipline 200 mm - (RD-L-16)-Z5-L016-IRR | 2027-06-13 → 2027-06-12 (-1d) | 2027-06-16 → 2027-06-14 (-2d) |  | -162.02d → -161d |
| 1770 | **RHD4-02-002-L016-(IRR)-Air Valves** | 2027-06-26 → 2027-06-24 (-2d) | 2027-06-30 → 2027-06-28 (-2d) |  |  |
| RHD4CZ5L016IRR3103 | Installation for Air Valves for Irrigation Network - (RD-L-16)-Z5-L016-IRR | 2027-06-26 → 2027-06-24 (-2d) | 2027-06-28 → 2027-06-26 (-2d) |  | -162.02d → -161d |
| RHD4CZ5L016IRR3203 | Stem and Service box for Air Valves for Irrigation Network - (RD-L-16)-Z5-L016-IRR | 2027-06-28 → 2027-06-27 (-1d) | 2027-06-30 → 2027-06-28 (-2d) |  | -158.02d → -157d |
| 6107 | **RHD4-02-002-L016-(IRR)-HDPE Pipes - 160 mm diameter** |  | 2027-07-03 → 2027-06-30 (-3d) |  |  |
| RHD4CZ5L016IRR1400 | Primary Test for HDPE Pipline 160 mm - (RD-L-16)-Z5-L016-IRR | 2027-06-28 → 2027-06-27 (-1d) | 2027-06-30 → 2027-06-28 (-2d) |  | -156.02d → -155d |
| RHD4CZ5L016IRR1500 | Backfilling and warning tape works for HDPE Pipline 160 mm - (RD-L-16)-Z5-L016-IRR | 2027-06-30 → 2027-06-29 (-1d) | 2027-07-03 → 2027-06-30 (-3d) |  | -156.02d → -155d |
| 6115 | **RHD4-02-002-L016-(IRR)-Gate Valves (Direct Buried)** | 2027-06-28 → 2027-06-27 (-1d) | 2027-07-06 → 2027-07-04 (-2d) |  |  |
| RHD4CZ5L016IRR3100 | Installation for Direct Buried Gate Valves - (RD-L-16)-Z5-L016-IRR | 2027-06-28 → 2027-06-27 (-1d) | 2027-07-01 → 2027-06-29 (-2d) |  | -155.02d → -154d |
| RHD4CZ5L016IRR3200 | Stem and Service box for Direct Buried Gate Valves - (RD-L-16)-Z5-L016-IRR | 2027-07-03 → 2027-07-01 (-2d) | 2027-07-06 → 2027-07-04 (-2d) |  | -156.02d → -155d |
| 6116 | **RHD4-02-002-L016-(IRR)-Butterfly Valve Chamber** | 2027-06-28 → 2027-06-27 (-1d) | 2027-07-07 → 2027-07-05 (-2d) |  |  |
| RHD4CZ5L016IRR2100 | Excavation and Bedding for Butterfly Valve Chamber for Irrigation Network - (RD-L-16)-Z5-L016-IRR | 2027-06-28 → 2027-06-27 (-1d) | 2027-06-30 → 2027-06-28 (-2d) |  | -162.02d → -161d |
| RHD4CZ5L016IRR2200 | PC works for Butterfly Valve Chamber for Irrigation Network - (RD-L-16)-Z5-L016-IRR | 2027-06-30 → 2027-06-29 (-1d) | 2027-07-03 → 2027-06-30 (-3d) |  | -162.02d → -161d |
| RHD4CZ5L016IRR2300 | Installation for Butterfly Valve Chamber for Irrigation Network - (RD-L-16)-Z5-L016-IRR | 2027-07-03 → 2027-07-01 (-2d) | 2027-07-05 → 2027-07-03 (-2d) |  | -162.02d → -161d |
| RHD4CZ5L016IRR2400 | Backfilling works for Butterfly Valve Chamber for Irrigation Network - (RD-L-16)-Z5-L016-IRR | 2027-07-05 → 2027-07-04 (-1d) | 2027-07-07 → 2027-07-05 (-2d) |  | -162.02d → -161d |
| 6117 | **RHD4-02-002-L016-(IRR)-Butterfly Valves** | 2027-07-05 → 2027-07-04 (-1d) | 2027-07-10 → 2027-07-07 (-3d) |  |  |
| RHD4CZ5L016IRR3101 | Installation for Butterfly Valves for Irrigation Network - (RD-L-16)-Z5-L016-IRR | 2027-07-05 → 2027-07-04 (-1d) | 2027-07-07 → 2027-07-05 (-2d) |  | -162.02d → -161d |
| RHD4CZ5L016IRR3201 | Stem and Service box for Butterfly Valves for Irrigation Network - (RD-L-16)-Z5-L016-IRR | 2027-07-07 → 2027-07-06 (-1d) | 2027-07-10 → 2027-07-07 (-3d) |  | -162.02d → -161d |
| 1769 | **RHD4-02-002-L016-(IRR)-Air Valve Chamber** | 2027-06-16 → 2027-06-15 (-1d) | 2027-06-28 → 2027-06-26 (-2d) |  |  |
| RHD4CZ5L016IRR2102 | Excavation and Bedding for Valve Chamber for Irrigation Network - (RD-L-16)-Z5-L016-IRR | 2027-06-16 → 2027-06-15 (-1d) | 2027-06-19 → 2027-06-16 (-3d) |  | -162.02d → -161d |
| RHD4CZ5L016IRR2202 | PC works for Valve Chamber for Irrigation Network - (RD-L-16)-Z5-L016-IRR | 2027-06-19 → 2027-06-17 (-2d) | 2027-06-21 → 2027-06-19 (-2d) |  | -162.02d → -161d |
| RHD4CZ5L016IRR2302 | Installation for Valve Chamber for Irrigation Network - (RD-L-16)-Z5-L016-IRR | 2027-06-21 → 2027-06-20 (-1d) | 2027-06-26 → 2027-06-23 (-3d) |  | -162.02d → -161d |
| RHD4CZ5L016IRR2402 | Backfilling works for Valve Chamber for Irrigation Network - (RD-L-16)-Z5-L016-IRR | 2027-06-26 → 2027-06-24 (-2d) | 2027-06-28 → 2027-06-26 (-2d) |  | -158.02d → -157d |
| 3841 | **RHD4-02-002-L016-(IRR)-HDPE Pipes - 315 mm diameter** | 2027-05-31 → 2027-05-30 (-1d) | 2027-06-12 → 2027-06-09 (-3d) |  |  |
| RHD4CZ5L016IRR1104 | Excavation works for HDPE Pipline 315 mm - (RD-L-16)-Z5-L016-IRR | 2027-05-31 → 2027-05-30 (-1d) | 2027-06-02 → 2027-05-31 (-2d) |  | -162.02d → -161d |
| RHD4CZ5L016IRR1204 | Bedding works for HDPE Pipline 315 mm - (RD-L-16)-Z5-L016-IRR | 2027-06-02 → 2027-06-01 (-1d) | 2027-06-05 → 2027-06-02 (-3d) |  | -162.02d → -161d |
| RHD4CZ5L016IRR1304 | Installing for HDPE Pipline 315 mm - (RD-L-16)-Z5-L016-IRR | 2027-06-05 → 2027-06-03 (-2d) | 2027-06-07 → 2027-06-05 (-2d) |  | -162.02d → -161d |
| RHD4CZ5L016IRR1404 | Primary Test for HDPE Pipline 315 mm - (RD-L-16)-Z5-L016-IRR | 2027-06-07 → 2027-06-06 (-1d) | 2027-06-09 → 2027-06-07 (-2d) |  | -162.02d → -161d |
| RHD4CZ5L016IRR1504 | Backfilling and warning tape works for HDPE Pipline 315 mm - (RD-L-16)-Z5-L016-IRR | 2027-06-09 → 2027-06-08 (-1d) | 2027-06-12 → 2027-06-09 (-3d) |  | -162.02d → -161d |
| 3870 | **RHD4-02-002-Z5-L016-Medium Voltage Network - MV** | 2027-06-20 → 2027-06-19 (-1d) | 2027-07-29 → 2027-07-27 (-2d) |  |  |
| 3871 | **RHD4-02-002-L016-(MV)-Medium Voltage cable trench** | 2027-06-20 → 2027-06-19 (-1d) | 2027-07-20 → 2027-07-18 (-2d) |  |  |
| RHD4CZ5L016MV1100 | Excavation for Medium Voltage Trench - (RD-L-16)-Z5-L016-MV | 2027-06-20 → 2027-06-19 (-1d) | 2027-07-05 → 2027-07-03 (-2d) |  | -153.02d → -152d |

| ID | Task | Start | Finish | Total float |
| --- | --- | --- | --- | --- |
| RHD4CZ5L016MV1200 | Trench Backfilling for Medium Voltage Network - (RD-L-16)-Z5-L016-MV | 2027-07-05 → 2027-07-04 (-1d) | 2027-07-20 → 2027-07-18 (-2d) | -116.02d → -115d |
| 3873 | **RHD4-02-002-L016-(MV)-Medium Voltage cables 3Cx 500 mm²** | 2027-07-05 → 2027-07-04 (-1d) | 2027-07-29 → 2027-07-27 (-2d) |  |
| RHD4CZ5L016MV3100 | Installation of Medium Voltage Cables 3Cx 500 mm² - (RD-L-16)-Z5-L016-MV | 2027-07-05 → 2027-07-04 (-1d) | 2027-07-14 → 2027-07-12 (-2d) | -153.02d → -152d |
| RHD4CZ5L016MV3200 | Joints Installation of Medium Voltage Cables 3Cx 500 mm² - (RD-L-16)-Z5-L016-MV | 2027-07-14 → 2027-07-13 (-1d) | 2027-07-17 → 2027-07-14 (-3d) | -113.02d → -112d |
| RHD4CZ5L016MV3300 | Testing of Medium Voltage Cables 3Cx 500 mm² - (RD-L-16)-Z5-L016-MV | 2027-07-20 → 2027-07-19 (-1d) | 2027-07-29 → 2027-07-27 (-2d) | -116.02d → -115d |
| 1982 | **RHD4-02-002-L07-(MV)-Medium Voltage cables 3Cx 50 mm²** | 2027-07-14 → 2027-07-13 (-1d) | 2027-07-17 → 2027-07-14 (-3d) |  |
| RHD4CZ5L016MV3401 | Termination of Medium Voltage Cables 3Cx 50 mm² - (RD-L-16)-Z5-L016-MV | 2027-07-14 → 2027-07-13 (-1d) | 2027-07-17 → 2027-07-14 (-3d) | -153.02d → -152d |
| 3877 | **RHD4-02-002-Z5-L016-Low Voltage Network - LV** | 2027-07-29 → 2027-07-28 (-1d) | 2027-08-08 → 2027-08-05 (-3d) |  |
| 3880 | **RHD4-02-002-L016-(LV)-Low Voltage cables** | 2027-07-29 → 2027-07-28 (-1d) | 2027-08-08 → 2027-08-05 (-3d) |  |
| RHD4CZ5L016LV3100 | Excavation for Low Voltage Cables for Low Voltage Network - (RD-L-16)-Z5-L016-LV | 2027-07-29 → 2027-07-28 (-1d) | 2027-08-01 → 2027-07-29 (-3d) | -116.02d → -115d |
| RHD4CZ5L016LV3200 | Cable Laying of Low Voltage Cables for Low Voltage Network - (RD-L-16)-Z5-L016-LV | 2027-08-01 → 2027-07-31 (-1d) | 2027-08-03 → 2027-08-01 (-2d) | -116.02d → -115d |
| RHD4CZ5L016LV3300 | Warning tape and Backfill for Low Voltage Cables for Low Voltage Network - (RD-L-16)-Z5-L016-LV | 2027-08-03 → 2027-08-02 (-1d) | 2027-08-05 → 2027-08-03 (-2d) | -116.02d → -115d |
| RHD4CZ5L016LV3400 | Testing of Low Voltage Cables for Low Voltage Network - (RD-L-16)-Z5-L016-LV | 2027-08-05 → 2027-08-04 (-1d) | 2027-08-08 → 2027-08-05 (-3d) | -116.02d → -115d |
| 3883 | **RHD4-02-002-Z5-L016-Street Lighting Network - SL** | 2027-06-16 → 2027-06-15 (-1d) | 2027-10-02 → 2027-09-29 (-3d) |  |
| 3884 | **RHD4-02-002-L016-(SL)-Street Lighting duct banks** | 2027-06-16 → 2027-06-15 (-1d) | 2027-06-26 → 2027-06-23 (-3d) |  |
| RHD4CZ5L016SL2100 | Excavation of Duct Banks for Street Lighting Network - (RD-L-16)-Z5-L016-SL | 2027-06-16 → 2027-06-15 (-1d) | 2027-06-19 → 2027-06-16 (-3d) | -161.02d → -160d |
| RHD4CZ5L016SL2200 | Installation of Duct Banks for Street Lighting Network - (RD-L-16)-Z5-L016-SL | 2027-06-19 → 2027-06-17 (-2d) | 2027-06-21 → 2027-06-19 (-2d) | -161.02d → -160d |
| RHD4CZ5L016SL2300 | Pouring of Duct Banks for Street Lighting Network - (RD-L-16)-Z5-L016-SL | 2027-06-21 → 2027-06-20 (-1d) | 2027-06-23 → 2027-06-21 (-2d) | -161.02d → -160d |
| RHD4CZ5L016SL2400 | Backfilling of Duct Banks for Street Lighting Network - (RD-L-16)-Z5-L016-SL | 2027-06-23 → 2027-06-22 (-1d) | 2027-06-26 → 2027-06-23 (-3d) | -161.02d → -160d |
| 3885 | **RHD4-02-002-L016-(SL)-Street Lighting Drawpit** | 2027-08-08 → 2027-08-07 (-1d) | 2027-08-12 → 2027-08-10 (-2d) |  |
| RHD4CZ5L016SL5100 | Excavation of Drawpit size 600x600x900mm for Street Lighting Network - (RD-L-16)-Z5-L016-SL | 2027-08-08 → 2027-08-07 (-1d) | 2027-08-10 → 2027-08-08 (-2d) | -115.02d → -114d |
| RHD4CZ5L016SL5200 | Installation of Drawpit size 600x600x900mm for Street Lighting Network - (RD-L-16)-Z5-L016-SL | 2027-08-10 → 2027-08-09 (-1d) | 2027-08-12 → 2027-08-10 (-2d) | -115.02d → -114d |
| 3886 | **RHD4-02-002-L016-(SL)-Street Lighting cables** | 2027-08-12 → 2027-08-11 (-1d) | 2027-09-04 → 2027-09-01 (-3d) |  |
| RHD4CZ5L016SL3100 | Excavation for Street Lighting Cables for Street Lighting Network - (RD-L-16)-Z5-L016-SL | 2027-08-12 → 2027-08-11 (-1d) | 2027-08-19 → 2027-08-17 (-2d) | -115.02d → -114d |
| RHD4CZ5L016SL3200 | Cable Laying of Street Lighting Cables for Street Lighting Network - (RD-L-16)-Z5-L016-SL | 2027-08-19 → 2027-08-18 (-1d) | 2027-08-25 → 2027-08-23 (-2d) | -115.02d → -114d |
| RHD4CZ5L016SL3300 | Warning tape and Backfill for Street Lighting Cables for Street Lighting Network - (RD-L-16)-Z5-L016-SL | 2027-08-25 → 2027-08-24 (-1d) | 2027-08-31 → 2027-08-29 (-2d) | -115.02d → -114d |
| RHD4CZ5L016SL3400 | Testing of Street Lighting Cables for Street Lighting Network - (RD-L-16)-Z5-L016-SL | 2027-08-31 → 2027-08-30 (-1d) | 2027-09-04 → 2027-09-01 (-3d) | -115.02d → -114d |
| 3887 | **RHD4-02-002-L016-(SL)-Street Lighting Poles** | 2027-09-04 → 2027-09-02 (-2d) | 2027-10-02 → 2027-09-29 (-3d) |  |
| RHD4CZ5L016SL1100 | Excavation for RC Base for Lighting Poles for Street Lighting Network - (RD-L-16)-Z5-L016-SL | 2027-09-04 → 2027-09-02 (-2d) | 2027-09-08 → 2027-09-06 (-2d) | -115.02d → -114d |
| RHD4CZ5L016SL1200 | Installation for RC Base for Lighting Poles for Street Lighting Network - (RD-L-16)-Z5-L016-SL | 2027-09-08 → 2027-09-07 (-1d) | 2027-09-13 → 2027-09-11 (-2d) | -115.02d → -114d |
| RHD4CZ5L016SL1300 | Backfill for RC Base for Lighting Poles for Street Lighting Network - (RD-L-16)-Z5-L016-SL | 2027-09-13 → 2027-09-12 (-1d) | 2027-09-18 → 2027-09-15 (-3d) | -115.02d → -114d |
| RHD4CZ5L016SL1400 | Installation for Lighting Poles for Street Lighting Network - (RD-L-16)-Z5-L016-SL | 2027-09-18 → 2027-09-16 (-2d) | 2027-09-25 → 2027-09-21 (-4d) | -115.02d → -114d |
| RHD4CZ5L016SL1500 | Luminaire Installation for Lighting Poles for Street Lighting Network - (RD-L-16)-Z5-L016-SL | 2027-09-27 → 2027-09-26 (-1d) | 2027-10-02 → 2027-09-29 (-3d) | -115.02d → -114d |
| 3889 | **RHD4-02-002-L016-(SL)-Street Lighting Earthing System** | 2027-09-25 → 2027-09-22 (-3d) | 2027-09-27 → 2027-09-25 (-2d) |  |
| RHD4CZ5L016SL6100 | Installation of Earthing for Lighting Poles and Fedder Pillers for Street Lighting Network - (RD-L-16)-Z5-L016-SL | 2027-09-25 → 2027-09-22 (-3d) | 2027-09-27 → 2027-09-25 (-2d) | -115.02d → -114d |
| 3895 | **RHD4-02-002-Z5-L016-Telecommunications Network - TC** | 2027-01-26 → 2027-01-27 (+1d) | 2027-11-07 → 2027-11-04 (-3d) |  |
| 3896 | **RHD4-02-002-L016-(TC)-Telecommunications Ducts** | 2027-10-02 → 2027-09-30 (-2d) | 2027-11-07 → 2027-11-04 (-3d) |  |
| RHD4CZ5L016TC2100 | Excavation of HDPE Ducts for Telecom Network - (RD-L-16)-Z5-L016-TC | 2027-10-02 → 2027-09-30 (-2d) | 2027-10-12 → 2027-10-10 (-2d) | -115.02d → -114d |
| RHD4CZ5L016TC2200 | Installation of HDPE Ducts for Telecom Network - (RD-L-16)-Z5-L016-TC | 2027-10-12 → 2027-10-11 (-1d) | 2027-10-27 → 2027-10-25 (-2d) | -115.02d → -114d |
| RHD4CZ5L016TC2400 | Backfilling of HDPE Ducts for Telecom Network - (RD-L-16)-Z5-L016-TC | 2027-10-27 → 2027-10-26 (-1d) | 2027-11-07 → 2027-11-04 (-3d) | -115.02d → -114d |
| 3897 | **RHD4-02-002-L016-(TC)-Telecommunications Manholes** | 2027-10-12 → 2027-10-11 (-1d) | 2027-10-21 → 2027-10-19 (-2d) |  |
| RHD4CZ5L016TC5100 | Excavation for Manholes for Telecom Network - (RD-L-16)-Z5-L016-TC | 2027-10-12 → 2027-10-11 (-1d) | 2027-10-17 → 2027-10-14 (-3d) | -110.02d → -109d |
| RHD4CZ5L016TC5200 | Installation of Manholes for Telecom Network - (RD-L-16)-Z5-L016-TC | 2027-10-17 → 2027-10-16 (-1d) | 2027-10-21 → 2027-10-19 (-2d) | -110.02d → -109d |
| 3898 | **RHD4-02-002-L016-(TC)-Telecomminications Road Crossings** | 2027-01-26 → 2027-01-27 (+1d) | 2027-02-03 → 2027-02-04 (+1d) |  |
| RHD4CZ5L016TC3100 | Excavation for Road Crossings for Telecom Network - (RD-L-16)-Z5-L016-TC | 2027-01-26 → 2027-01-27 (+1d) | 2027-01-27 → 2027-01-28 (+1d) | -169d → -170d |
| RHD4CZ5L016TC3200 | Installation of Road Crossings for Telecom Network - (RD-L-16)-Z5-L016-TC | 2027-01-28 → 2027-01-30 (+2d) | 2027-01-30 → 2027-01-31 (+1d) | -167d → -168d |
| RHD4CZ5L016TC3300 | Pouring of Road Crossings for Telecom Network - (RD-L-16)-Z5-L016-TC | 2027-01-31 → 2027-02-01 (+1d) | 2027-02-01 → 2027-02-02 (+1d) | -167d → -168d |
| RHD4CZ5L016TC3400 | Backfilling of Road Crossings for Telecom Network - (RD-L-16)-Z5-L016-TC | 2027-02-02 → 2027-02-03 (+1d) | 2027-02-03 → 2027-02-04 (+1d) | -167d → -168d |
| 3899 | **RHD4-02-002-Z5-L016-Information and Communication Technologies - ICT** | 2027-01-28 → 2027-01-30 (+2d) | 2027-12-23 → 2027-12-21 (-2d) |  |
| 3900 | **RHD4-02-002-L016-(ICT)-Information and Communication Technologies Ducts** | 2027-11-07 → 2027-11-06 (-1d) | 2027-12-14 → 2027-12-12 (-2d) |  |
| RHD4CZ5L016ICT2100 | Excavation of HDPE Ducts for ICT Network - (RD-L-16)-Z5-L016-ICT | 2027-11-07 → 2027-11-06 (-1d) | 2027-11-17 → 2027-11-15 (-2d) | -115.02d → -114d |
| RHD4CZ5L016ICT2200 | Installation of HDPE Ducts for ICT Network - (RD-L-16)-Z5-L016-ICT | 2027-11-17 → 2027-11-16 (-1d) | 2027-12-04 → 2027-12-01 (-3d) | -115.02d → -114d |
| RHD4CZ5L016ICT2400 | Backfilling of HDPE Ducts for ICT Network - (RD-L-16)-Z5-L016-ICT | 2027-12-04 → 2027-12-02 (-2d) | 2027-12-14 → 2027-12-12 (-2d) | -115.02d → -114d |
| 3901 | **RHD4-02-002-L016-(ICT)-Information and Communication Technologies Manholes** | 2027-12-14 → 2027-12-13 (-1d) | 2027-12-23 → 2027-12-21 (-2d) |  |
| RHD4CZ5L016ICT5100 | Excavation for Manholes for ICT Network - (RD-L-16)-Z5-L016-ICT | 2027-12-14 → 2027-12-13 (-1d) | 2027-12-19 → 2027-12-16 (-3d) | -115.02d → -114d |
| RHD4CZ5L016ICT5200 | Installation of Manholes for ICT Network - (RD-L-16)-Z5-L016-ICT | 2027-12-19 → 2027-12-18 (-1d) | 2027-12-23 → 2027-12-21 (-2d) | -115.02d → -114d |
| 3902 | **RHD4-02-002-L016-(ICT)-Information and Communication Technologies Road Crossings** | 2027-01-28 → 2027-01-30 (+2d) | 2027-02-20 → 2027-02-09 (-11d) |  |
| RHD4CZ5L016ICT3100 | Excavation for Road Crossings for ICT Network - (RD-L-16)-Z5-L016-ICT | 2027-01-28 → 2027-01-30 (+2d) | 2027-01-30 → 2027-01-31 (+1d) | -169d → -170d |
| RHD4CZ5L016ICT3200 | Installation of Road Crossings for ICT Network - (RD-L-16)-Z5-L016-ICT | 2027-02-14 → 2027-02-03 (-11d) | 2027-02-15 → 2027-02-04 (-11d) | -181d → -172d |
| RHD4CZ5L016ICT3300 | Pouring of Road Crossings for ICT Network - (RD-L-16)-Z5-L016-ICT | 2027-02-16 → 2027-02-06 (-10d) | 2027-02-17 → 2027-02-07 (-10d) | -181d → -172d |
| RHD4CZ5L016ICT3400 | Backfilling of Road Crossings for ICT Network - (RD-L-16)-Z5-L016-ICT | 2027-02-18 → 2027-02-08 (-10d) | 2027-02-20 → 2027-02-09 (-11d) | -181d → -172d |
| 3903 | **RHD4-02-002-Z5-L016-Security Network - CCTV** | 2027-12-23 → 2027-12-22 (-1d) | 2028-02-05 → 2028-02-02 (-3d) |  |
| 3904 | **RHD4-02-002-L016-(CCTV)-Civil Works** | 2027-12-23 → 2027-12-22 (-1d) | 2028-01-04 → 2028-01-02 (-2d) |  |
| RHD4CZ5L016CCTV2100 | Civil Works for Security Network - (RD-L-16)-Z5-L016-CCTV | 2027-12-23 → 2027-12-22 (-1d) | 2028-01-04 → 2028-01-02 (-2d) | -115.02d → -114d |
| 3905 | **RHD4-02-002-L016-(CCTV)-CCTV Poles** | 2028-01-04 → 2028-01-03 (-1d) | 2028-01-16 → 2028-01-13 (-3d) |  |
| RHD4CZ5L016CCTV1100 | Excavation for RC Base for CCTV Poles for Security Network - (RD-L-16)-Z5-L016-CCTV | 2028-01-04 → 2028-01-03 (-1d) | 2028-01-06 → 2028-01-04 (-2d) | -115.02d → -114d |
| RHD4CZ5L016CCTV1200 | Installation for RC Base for CCTV Poles for Security Network - (RD-L-16)-Z5-L016-CCTV | 2028-01-06 → 2028-01-05 (-1d) | 2028-01-09 → 2028-01-06 (-3d) | -115.02d → -114d |
| RHD4CZ5L016CCTV1300 | Backfill for RC Base for CCTV Poles for Security Network - (RD-L-16)-Z5-L016-CCTV | 2028-01-09 → 2028-01-08 (-1d) | 2028-01-11 → 2028-01-09 (-2d) | -115.02d → -114d |
| RHD4CZ5L016CCTV1400 | Installation for CCTV Poles for Security Network - (RD-L-16)-Z5-L016-CCTV | 2028-01-11 → 2028-01-10 (-1d) | 2028-01-13 → 2028-01-11 (-2d) | -115.02d → -114d |
| RHD4CZ5L016CCTV1500 | Protection post Installation for CCTV Poles for Security Network - (RD-L-16)-Z5-L016-CCTV | 2028-01-13 → 2028-01-12 (-1d) | 2028-01-16 → 2028-01-13 (-3d) | -115.02d → -114d |

| ID | Task | Start | Finish | Complete | Total float |
| --- | --- | --- | --- | --- | --- |
| 3906 | **RHD4-02-002-L016-(CCTV)-Camera** | 2028-01-16 → 2028-01-15 (-1d) | 2028-01-18 → 2028-01-16 (-2d) |  |  |
| RHD4CZ5L016CCTV3100 | Installation for Cameras for Security Network - (RD-L-16)-Z5-L016-CCTV | 2028-01-16 → 2028-01-15 (-1d) | 2028-01-18 → 2028-01-16 (-2d) |  | -115.02d → -114d |
| 3907 | **RHD4-02-002-L016-(CCTV)-Power and Infrastructure** | 2028-01-13 → 2028-01-12 (-1d) | 2028-01-18 → 2028-01-16 (-2d) |  |  |
| RHD4CZ5L016CCTV4100 | Installation of Power outlet, UPS and midspan for PTZ Camerafor Cameras for Security Network - (RD-L-16)-Z5-L016-CCTV | 2028-01-13 → 2028-01-12 (-1d) | 2028-01-16 → 2028-01-13 (-3d) |  | -115.02d → -114d |
| RHD4CZ5L016CCTV4200 | Short Range Wireless PoP wireless Bridgefor CCTV Poles for Security Network - (RD-L-16)-Z5-L016-CCTV | 2028-01-16 → 2028-01-15 (-1d) | 2028-01-18 → 2028-01-16 (-2d) |  | -115.02d → -114d |
| 3909 | **RHD4-02-002-L016-(CCTV)-CCTV Panels and Components** | 2028-01-18 → 2028-01-17 (-1d) | 2028-02-05 → 2028-02-02 (-3d) |  |  |
| RHD4CZ5L016CCTV6100 | Installation for CCTV Panels for Security Network - (RD-L-16)-Z5-L016-CCTV | 2028-01-18 → 2028-01-17 (-1d) | 2028-02-05 → 2028-02-02 (-3d) |  | -115.02d → -114d |
| 3542 | **RHD4-02-002-Z5-A014** |  | 2028-03-22 → 2028-03-20 (-2d) |  |  |
| 3721 | **RHD4-02-002-Z5-A014-Road Works - RD** |  | 2028-03-22 → 2028-03-20 (-2d) |  |  |
| 3724 | **RHD4-02-002-A014-(RD)-Bituminous base course Two Layers, including (MC1)&(RC2)** |  | 2028-02-16 → 2028-02-14 (-2d) |  |  |
| RHD4CZ5A014RD3100 | Supply, lay and Asphaltic base course including Prime Coat (MC1) for 1st Layer - (RD-A-1 /4)-Z5-A014-RD |  | 2027-01-21 → 2027-01-23 (+2d) |  | -177d → -178d |
| RHD4CZ5A014RD3200 | Supply, lay and Asphaltic base course including Tack Coat (RC2) for 2nd Layer - (RD-A-1 /4)-Z5-A014-RD | 2028-02-08 → 2028-02-07 (-1d) | 2028-02-16 → 2028-02-14 (-2d) |  | -109.02d → -108d |
| 3726 | **RHD4-02-002-A014-(RD)-Precast Concrete Curb** | 2028-02-16 → 2028-02-15 (-1d) | 2028-03-02 → 2028-02-26 (-5d) |  |  |
| RHD4CZ5A014RD5100 | Supply and installation Precast Concrete Kerb for Roads - (RD-A-1 /4)-Z5-A014-RD | 2028-02-16 → 2028-02-15 (-1d) | 2028-03-02 → 2028-02-26 (-5d) |  | -109.02d → -108d |
| 3729 | **RHD4-02-002-A014-(RD)-Traffic Signage** | 2028-03-02 → 2028-03-01 (-1d) | 2028-03-11 → 2028-03-08 (-3d) |  |  |
| RHD4CZ5A014RD8100 | Installation of Traffic Signage for Road Network - (RD-A-1 /4)-Z5-A014-RD | 2028-03-02 → 2028-03-01 (-1d) | 2028-03-11 → 2028-03-08 (-3d) |  | -105.02d → -104d |
| 3725 | **RHD4-02-002-A014-(RD)-Bituminous concrete wearing course including tack coat (RC2)** | 2028-03-05 → 2028-03-04 (-1d) | 2028-03-08 → 2028-03-06 (-2d) |  |  |
| RHD4CZ5A014RD4100 | Supply, lay and compaction Asphaltic wearing course including tack Coat (RC2)for Road Network - (RD-A-1 /4)-Z5-A014-RD | 2028-03-05 → 2028-03-04 (-1d) | 2028-03-08 → 2028-03-06 (-2d) |  | -111.02d → -110d |
| 3728 | **RHD4-02-002-A014-(RD)-Pavement Marking** | 2028-03-13 → 2028-03-12 (-1d) | 2028-03-22 → 2028-03-20 (-2d) |  |  |
| RHD4CZ5A014RD7100 | Pavement Markings for Road Network - (RD-A-1 /4)-Z5-A014-RD | 2028-03-13 → 2028-03-12 (-1d) | 2028-03-22 → 2028-03-20 (-2d) |  | -115.02d → -114d |
| 2039 | **RHD4-02-002-A014-(ST)-GRP Pipes - 1000 mm diameter** |  | 2027-01-09 → 2027-01-10 (+1d) |  |  |
| RHD4CZ5A014ST1406 | Primary Test for GRP Pipe Line 1000 mm - (RD-A-1 /4)-Z5-A014-ST | 2027-01-07 → 2027-01-09 (+2d) | 2027-01-09 → 2027-01-10 (+1d) |  | -173d → -174d |
| 2416 | **RHD4-02-002-A014-(ST)-GRP Pipes - 800 mm diameter** |  | 2027-01-09 → 2027-01-10 (+1d) |  |  |
| RHD4CZ5A014ST1404 | Primary Test for GRP Pipe Line 800 mm - (RD-A-1 /4)-Z5-A014-ST | 2027-01-07 → 2027-01-09 (+2d) | 2027-01-09 → 2027-01-10 (+1d) |  | -163d → -164d |
| 3565 | **RHD4-02-002-A014-(ST)-MH Works - 2000 mm diameter** |  | 2027-01-19 → 2027-01-20 (+1d) |  |  |
| RHD4CZ5A014ST3202 | Installation of Base for MH 2000 mm - (RD-A-1 /4)-Z5-A014-ST |  | 2027-01-09 → 2027-01-10 (+1d) |  | -198d → -194d |
| RHD4CZ5A014ST3302 | MH Ring and C.Slab works and Backfilling works for MH 2000 mm - (RD-A-1 /4)-Z5-A014-ST |  | 2027-01-13 → 2027-01-14 (+1d) |  | -198d → -194d |
| RHD4CZ5A014ST3402 | Steel Cover for MH 2000 mm - (RD-A-1 /4)-Z5-A014-ST | 2027-01-14 → 2027-01-16 (+2d) | 2027-01-16 → 2027-01-17 (+1d) |  | -198d → -194d |
| RHD4CZ5A014ST3502 | Finishing, Benching, Testing works for MH 2000 mm - (RD-A-1 /4)-Z5-A014-ST | 2027-01-17 → 2027-01-18 (+1d) | 2027-01-19 → 2027-01-20 (+1d) |  | -195d → -193d |
| 3564 | **RHD4-02-002-A014-(ST)-MH Works - 1500 mm diameter** |  | 2027-01-25 → 2027-01-26 (+1d) |  |  |
| RHD4CZ5A014ST3401 | Steel Cover for MH 1500 mm - (RD-A-1 /4)-Z5-A014-ST | 2027-01-17 → 2027-01-18 (+1d) | 2027-01-19 → 2027-01-20 (+1d) |  | -198d → -194d |
| RHD4CZ5A014ST3501 | Finishing, Benching, Testing works for MH 1500 mm - (RD-A-1 /4)-Z5-A014-ST | 2027-01-20 → 2027-01-21 (+1d) | 2027-01-25 → 2027-01-26 (+1d) |  | -198d → -194d |
| 3563 | **RHD4-02-002-A014-(ST)-MH Works - 1200 mm diameter** |  | 2027-01-28 → 2027-01-30 (+2d) |  |  |
| RHD4CZ5A014ST3100 | Excavation and PC Blinding works for MH 1200 mm - (RD-A-1 /4)-Z5-A014-ST |  | 2027-01-14 → 2026-11-01 A (-74d) | 90% → 100% | -196d → none |
| RHD4CZ5A014ST3200 | Installation of Base for MH 1200 mm - (RD-A-1 /4)-Z5-A014-ST |  | 2027-01-20 → 2026-11-05 A (-76d) | 90% → 100% | -197.02d → none |
| RHD4CZ5A014ST3300 | MH Ring and C.Slab works and Backfilling works for MH 1200 mm - (RD-A-1 /4)-Z5-A014-ST |  | 2027-01-23 → 2026-11-10 A (-74d) | 50% → 100% | -197.02d → none |
| RHD4CZ5A014ST3500 | Finishing, Benching, Testing works for MH 1200 mm - (RD-A-1 /4)-Z5-A014-ST | 2027-01-20 → 2027-01-21 (+1d) | 2027-01-24 → 2027-01-25 (+1d) |  | -195d → -193d |
| RHD4CZ5A014ST3400 | Steel Cover for MH 1200 mm - (RD-A-1 /4)-Z5-A014-ST | 2027-01-25 → 2027-01-26 (+1d) | 2027-01-28 → 2027-01-30 (+2d) |  | -195d → -193d |
| 3558 | **RHD4-02-002-A014-(ST)-GRP Pipes - 1500 mm diameter** |  | 2027-01-25 → 2027-01-21 (-4d) |  |  |
| RHD4CZ5A014ST1411 | Primary Test for GRP Pipe Line 1500 mm - (RD-A-1 /4)-Z5-A014-ST | 2027-01-23 → 2027-01-20 (-3d) | 2027-01-25 → 2027-01-21 (-4d) |  | -176.02d → -174d |
| 3550 | **RHD4-02-002-A014-(ST)-GRP Pipes - 700 mm diameter** |  | 2027-01-23 → 2027-01-21 (-2d) |  |  |
| RHD4CZ5A014ST1403 | Primary Test for GRP Pipe Line 700 mm - (RD-A-1 /4)-Z5-A014-ST |  | 2027-01-23 → 2027-01-21 (-2d) |  | -167.02d → -167d |
| 3549 | **RHD4-02-002-A014-(ST)-GRP Pipes - 600 mm diameter** |  | 2027-01-23 → 2027-01-21 (-2d) |  |  |
| RHD4CZ5A014ST1402 | Primary Test for GRP Pipe Line 600 mm - (RD-A-1 /4)-Z5-A014-ST |  | 2027-01-23 → 2027-01-21 (-2d) |  | -167.02d → -167d |
| 3548 | **RHD4-02-002-A014-(ST)-GRP Pipes - 500 mm diameter** |  | 2027-01-27 → 2027-01-24 (-3d) |  |  |
| RHD4CZ5A014ST1501 | Backfilling and warning tape works for GRP Pipe Line 500 mm - (RD-A-1 /4)-Z5-A014-ST | 2027-01-25 → 2027-01-23 (-2d) | 2027-01-27 → 2027-01-24 (-3d) |  | -176.02d → -174d |
| 3547 | **RHD4-02-002-A014-(ST)-GRP Pipes - 400 mm diameter** |  | 2027-01-23 → 2027-01-21 (-2d) |  |  |
| RHD4CZ5A014ST1400 | Primary Test for GRP Pipe Line 400 mm - (RD-A-1 /4)-Z5-A014-ST |  | 2027-01-23 → 2027-01-21 (-2d) |  | -172.02d → -172d |
| 3562 | **RHD4-02-002-A014-(ST)-UPVC Pipes - 400 mm diameter** |  | 2027-01-25 → 2027-01-21 (-4d) |  |  |
| RHD4CZ5A014ST2401 | Primary Test for UPVC Pipe Line 400 mm - (RD-A-1 /4)-Z5-A014-ST | 2027-01-23 → 2027-01-20 (-3d) | 2027-01-25 → 2027-01-21 (-4d) |  | -176.02d → -174d |
| 3561 | **RHD4-02-002-A014-(ST)-UPVC Pipes - 300 mm diameter** |  | 2027-02-01 → 2027-01-30 (-2d) |  |  |
| RHD4CZ5A014ST2100 | Excavation works for UPVC Pipe Line 300 mm - (RD-A-1 /4)-Z5-A014-ST |  | 2027-01-24 → 2027-01-20 (-4d) |  | -177.02d → -175d |
| RHD4CZ5A014ST2200 | Bedding works for UPVC Pipe Line 300 mm - (RD-A-1 /4)-Z5-A014-ST |  | 2027-01-25 → 2027-01-21 (-4d) |  | -177.02d → -175d |
| RHD4CZ5A014ST2300 | Installing for UPVC Pipe Line 300 mm - (RD-A-1 /4)-Z5-A014-ST |  | 2027-01-26 → 2027-01-23 (-3d) |  | -177.02d → -175d |
| RHD4CZ5A014ST2500 | Backfilling and warning tape works for UPVC Pipe Line 300 mm - (RD-A-1 /4)-Z5-A014-ST |  | 2027-02-01 → 2027-01-30 (-2d) |  | -177.02d → -176d |
| RHD4CZ5A014ST2400 | Primary Test for UPVC Pipe Line 300 mm - (RD-A-1 /4)-Z5-A014-ST | 2027-01-26 → 2027-01-24 (-2d) | 2027-01-31 → 2027-01-27 (-4d) |  | -177.02d → -175d |
| 3566 | **RHD4-02-002-A014-(ST)-Discharge Chamber - 1500*1200 mm** |  | 2027-01-30 → 2027-01-28 (-2d) |  |  |
| RHD4CZ5A014ST5101 | Excavation+Bedding for Discharge Chamber With GRP 800 mm Dia - 1500*1200 mm - (RD-A-1 /4)-Z5-A014-ST |  | 2027-01-23 → 2027-01-21 (-2d) |  | -177.02d → -177d |
| RHD4CZ5A014ST5201 | PC works for Discharge Chamber With GRP 800 mm Dia - 1500*1200 mm - (RD-A-1 /4)-Z5-A014-ST |  | 2027-01-25 → 2027-01-24 (-1d) |  | -176.02d → -176d |
| RHD4CZ5A014ST5301 | Installation for Discharge Chamber With GRP 800 mm Dia - 1500*1200 mm - (RD-A-1 /4)-Z5-A014-ST |  | 2027-01-27 → 2027-01-26 (-1d) |  | -176.02d → -176d |
| RHD4CZ5A014ST5401 | Backfilling works for Discharge Chamber With GRP 800 mm Dia - 1500*1200 mm - (RD-A-1 /4)-Z5-A014-ST |  | 2027-01-30 → 2027-01-28 (-2d) |  | -176.02d → -176d |
| 3567 | **RHD4-02-002-A014-(ST)-HDPE Force Main Pipeline - 200 mm diameter** | 2027-01-23 → 2027-01-24 (+1d) |  |  |  |
| RHD4CZ5A014ST9100 | Excavation works for HDPE Force Main Pipeline 200 mm - (RD-A-1 /4)-Z5-A014-ST | 2027-01-23 → 2027-01-24 (+1d) |  |  | -177.02d → -178d |
| RHD4CZ5A014ST9200 | Bedding works for HDPE Force Main Pipeline 200 mm - (RD-A-1 /4)-Z5-A014-ST | 2027-01-25 → 2027-01-26 (+1d) |  |  | -177.02d → -178d |
| RHD4CZ5A014ST9300 | Installing for HDPE Force Main Pipeline 200 mm - (RD-A-1 /4)-Z5-A014-ST | 2027-01-27 → 2027-01-28 (+1d) |  |  | -177.02d → -178d |
| RHD4CZ5A014ST9400 | Primary Test for HDPE Force Main Pipeline 200 mm - (RD-A-1 /4)-Z5-A014-ST | 2027-01-30 → 2027-01-31 (+1d) |  |  | -177.02d → -178d |
| RHD4CZ5A014ST9500 | Backfilling and warning tape works for HDPE Force Main Pipeline 200 mm - (RD-A-1 /4)-Z5-A014-ST | 2027-02-01 → 2027-02-02 (+1d) |  |  | -177.02d → -178d |
| 3569 | **RHD4-02-002-A014-(ST)-Concrete Encasement** |  | 2027-01-27 → 2027-01-24 (-3d) |  |  |
| RHD4CZ5A014ST6100 | Pipe Encasement for Storm Pipelines - (RD-A-1 /4)-Z5-A014-ST |  | 2027-01-27 → 2027-01-24 (-3d) |  | -174.02d → -172d |
| 3570 | **RHD4-02-002-Z5-A014-Catch Basin - ST** |  | 2027-02-20 → 2027-02-16 (-4d) |  |  |

| ID | Task | Start | Finish | Complete | Total float |
| --- | --- | --- | --- | --- | --- |
| 3571 | **RHD4-02-002-A014-(ST)-Single Catch Basin Works** |  | 2027-02-17 → 2027-02-14 (-3d) |  |  |
| RHD4CZ5A014ST7300 | Rings & C.Slab & Final Backfill for Single Catch Basin - (RD-A-1 /4)-Z5-A014-ST |  | 2027-01-31 → 2027-01-27 (-4d) |  | -197.02d → -195d |
| RHD4CZ5A014ST7400 | Steel Cover for Single Catch Basin - (RD-A-1 /4)-Z5-A014-ST | 2027-01-31 → 2027-01-28 (-3d) | 2027-02-06 → 2027-02-02 (-4d) |  | -197.02d → -195d |
| RHD4CZ5A014ST7500 | Finishing and Insulation works for Single Catch Basin - (RD-A-1 /4)-Z5-A014-ST | 2027-02-06 → 2027-02-03 (-3d) | 2027-02-17 → 2027-02-14 (-3d) |  | -197.02d → -195d |
| 3572 | **RHD4-02-002-A014-(ST)-Double Catch Basin Works** |  | 2027-02-20 → 2027-02-16 (-4d) |  |  |
| RHD4CZ5A014ST8400 | Steel Cover for Double Catch Basin - (RD-A-1 /4)-Z5-A014-ST | 2027-01-31 → 2027-01-28 (-3d) | 2027-02-02 → 2027-01-30 (-3d) |  | -197.02d → -193d |
| RHD4CZ5A014ST8500 | Finishing and Insulation works for Double Catch Basin - (RD-A-1 /4)-Z5-A014-ST | 2027-02-17 → 2027-02-15 (-2d) | 2027-02-20 → 2027-02-16 (-4d) |  | -197.02d → -195d |
| 3595 | **RHD4-02-002-Z5-A014-Sewage Network - SW** |  | 2027-02-17 → 2027-02-15 (-2d) |  |  |
| 4361 | **RHD4-02-002-A014-(SW)-MH Works - 1200 mm diameter** |  | 2027-02-17 → 2027-02-15 (-2d) |  |  |
| RHD4CZ5A014SW3100 | Excavation and PC Blinding works for MH 1200 mm - (RD-A-1 /4)-Z5-A014-SW |  | 2027-02-04 → 2027-02-02 (-2d) |  | -148.02d → -147d |
| RHD4CZ5A014SW3200 | Installation of Base for MH 1200 mm - (RD-A-1 /4)-Z5-A014-SW |  | 2027-02-08 → 2027-02-06 (-2d) |  | -148.02d → -147d |
| RHD4CZ5A014SW3300 | MH Ring and C.Slab works and Backfilling works for MH 1200 mm - (RD-A-1 /4)-Z5-A014-SW |  | 2027-02-11 → 2027-02-09 (-2d) |  | -148.02d → -147d |
| RHD4CZ5A014SW3400 | Steel Cover for MH 1200 mm - (RD-A-1 /4)-Z5-A014-SW | 2027-02-11 → 2027-02-10 (-1d) | 2027-02-14 → 2027-02-11 (-3d) |  | -148.02d → -147d |
| RHD4CZ5A014SW3500 | Finishing, Benching, Testing works for MH 1200 mm - (RD-A-1 /4)-Z5-A014-SW | 2027-02-14 → 2027-02-13 (-1d) | 2027-02-17 → 2027-02-15 (-2d) |  | -148.02d → -147d |
| 3601 | **RHD4-02-002-A014-(SW)-UPVC Pipes - 200 mm diameter** |  | 2027-02-03 → 2027-02-01 (-2d) |  |  |
| RHD4CZ5A014SW2400 | Primary Test for UPVC Pipe Line 200 mm - (RD-A-1 /4)-Z5-A014-SW | 2027-02-01 → 2027-01-31 (-1d) | 2027-02-03 → 2027-02-01 (-2d) |  | -177.02d → -176d |
| 3632 | **RHD4-02-002-Z5-A014-Potable Network - PT** | 2027-02-03 → 2026-09-29 (-127d) |  |  |  |
| 3635 | **RHD4-02-002-A014-(PT)-HDPE Pipes - 200 mm diameter** | 2027-02-03 → 2026-09-29 (-127d) | 2027-03-06 → 2027-03-01 (-5d) |  |  |
| RHD4CZ5A014PT1102 | Excavation works for HDPE Pipline 200 mm - (RD-A-1 /4)-Z5-A014-PT | 2027-02-03 → 2026-09-29 A (-127d) |  | 0% → 46% | -177.02d → -178d |
| RHD4CZ5A014PT1202 | Bedding works for HDPE Pipline 200 mm - (RD-A-1 /4)-Z5-A014-PT | 2027-02-09 → 2026-10-01 A (-131d) |  | 0% → 51% | -170.02d → -167d |
| RHD4CZ5A014PT1302 | Installing for HDPE Pipline 200 mm - (RD-A-1 /4)-Z5-A014-PT | 2027-02-14 → 2026-10-03 A (-134d) | 2027-02-23 → 2027-02-17 (-6d) | 0% → 52% | -170.02d → -167d |
| RHD4CZ5A014PT1502 | Backfilling and warning tape works for HDPE Pipline 200 mm - (RD-A-1 /4)-Z5-A014-PT | 2027-02-27 → 2026-11-07 A (-112d) | 2027-03-06 → 2027-03-01 (-5d) | 0% → 51% | -170.02d → -167d |
| RHD4CZ5A014PT1402 | Primary Test for HDPE Pipline 200 mm - (RD-A-1 /4)-Z5-A014-PT | 2027-02-23 → 2027-02-18 (-5d) | 2027-02-27 → 2027-02-21 (-6d) |  | -170.02d → -167d |
| 2692 | **RHD4-02-002-A014-(PT)-Gate Valves (Direct Buried)** | 2027-02-23 → 2027-02-18 (-5d) | 2027-02-28 → 2027-02-23 (-5d) |  |  |
| RHD4CZ5A014PT3100 | Installation for Direct Buried Gate Valves - (RD-A-1 /4)-Z5-A014-PT | 2027-02-23 → 2027-02-18 (-5d) | 2027-02-25 → 2027-02-20 (-5d) |  | -168.02d → -165d |
| RHD4CZ5A014PT3200 | Stem and Service box for Direct Buried Gate Valves - (RD-A-1 /4)-Z5-A014-PT | 2027-02-25 → 2027-02-21 (-4d) | 2027-02-28 → 2027-02-23 (-5d) |  | -168.02d → -165d |
| 3642 | **RHD4-02-002-A014-(PT)-Wash out Valves** | 2027-03-16 → 2027-03-13 (-3d) | 2027-03-24 → 2027-03-22 (-2d) |  |  |
| RHD4CZ5A014PT3102 | Installation for Wash out Valves for Potable Water Network - (RD-A-1 /4)-Z5-A014-PT | 2027-03-16 → 2027-03-13 (-3d) | 2027-03-18 → 2027-03-14 (-4d) |  | -167.02d → -164d |
| RHD4CZ5A014PT3202 | Stem and Service box for Wash out Valves for Potable Water Network - (RD-A-1 /4)-Z5-A014-PT | 2027-03-22 → 2027-03-21 (-1d) | 2027-03-24 → 2027-03-22 (-2d) |  | -170.02d → -169d |
| 3643 | **RHD4-02-002-A014-(PT)-Air Valve Chambers** | 2027-03-06 → 2027-03-02 (-4d) | 2027-03-18 → 2027-03-14 (-4d) |  |  |
| RHD4CZ5A014PT2102 | Excavation and Bedding for Air Valve Chambers for Potable Water Network - (RD-A-1 /4)-Z5-A014-PT | 2027-03-06 → 2027-03-02 (-4d) | 2027-03-08 → 2027-03-03 (-5d) |  | -168.02d → -165d |
| RHD4CZ5A014PT2202 | PC works for Air Valve Chambers for Potable Water Network - (RD-A-1 /4)-Z5-A014-PT | 2027-03-08 → 2027-03-04 (-4d) | 2027-03-14 → 2027-03-06 (-8d) |  | -168.02d → -165d |
| RHD4CZ5A014PT2302 | Installation for Air Valve Chambers for Potable Water Network - (RD-A-1 /4)-Z5-A014-PT | 2027-03-14 → 2027-03-07 (-7d) | 2027-03-16 → 2027-03-08 (-8d) |  | -168.02d → -165d |
| RHD4CZ5A014PT2402 | Backfilling works for Air Valve Chambers for Potable Water Network - (RD-A-1 /4)-Z5-A014-PT | 2027-03-16 → 2027-03-13 (-3d) | 2027-03-18 → 2027-03-14 (-4d) |  | -168.02d → -165d |
| 3644 | **RHD4-02-002-A014-(PT)-Air Valves** | 2027-03-16 → 2027-03-13 (-3d) |  |  |  |
| RHD4CZ5A014PT3103 | Installation for Air Valves for Potable Water Network - (RD-A-1 /4)-Z5-A014-PT | 2027-03-16 → 2027-03-13 (-3d) | 2027-03-18 → 2027-03-14 (-4d) |  | -168.02d → -165d |
| RHD4CZ5A014PT3203 | Stem and Service box for Air Valves for Potable Water Network - (RD-A-1 /4)-Z5-A014-PT | 2027-03-29 → 2027-03-30 (+1d) |  |  | -177.02d → -178d |
| 3645 | **RHD4-02-002-A014-(PT)-Fire Hydrant** | 2027-03-06 → 2027-03-02 (-4d) | 2027-03-22 → 2027-03-17 (-5d) |  |  |
| RHD4CZ5A014PT4100 | Excavation and Bedding and Pipe Installation for Fire Hydrant - (RD-A-1 /4)-Z5-A014-PT | 2027-03-06 → 2027-03-02 (-4d) | 2027-03-13 → 2027-03-04 (-9d) |  | -168.02d → -165d |
| RHD4CZ5A014PT4200 | Valve Installation for Fire Hydrant - (RD-A-1 /4)-Z5-A014-PT | 2027-03-13 → 2027-03-06 (-7d) | 2027-03-15 → 2027-03-07 (-8d) |  | -168.02d → -165d |
| RHD4CZ5A014PT4300 | Stem for Fire Hydrant - (RD-A-1 /4)-Z5-A014-PT | 2027-03-15 → 2027-03-08 (-7d) | 2027-03-17 → 2027-03-13 (-4d) |  | -168.02d → -165d |
| RHD4CZ5A014PT4400 | Fire Installation for Fire Hydrant - (RD-A-1 /4)-Z5-A014-PT | 2027-03-17 → 2027-03-14 (-3d) | 2027-03-20 → 2027-03-15 (-5d) |  | -168.02d → -165d |
| RHD4CZ5A014PT4500 | Protection Barriers for Fire Hydrant - (RD-A-1 /4)-Z5-A014-PT | 2027-03-20 → 2027-03-16 (-4d) | 2027-03-22 → 2027-03-17 (-5d) |  | -168.02d → -165d |
| 3641 | **RHD4-02-002-A014-(PT)-Wash out Valve Chambers** | 2027-03-06 → 2027-03-02 (-4d) | 2027-03-22 → 2027-03-17 (-5d) |  |  |
| RHD4CZ5A014PT2101 | Excavation and Bedding for Wash out Valve Chambers for Potable Water Network - (RD-A-1 /4)-Z5-A014-PT | 2027-03-06 → 2027-03-02 (-4d) | 2027-03-08 → 2027-03-03 (-5d) |  | -170.02d → -167d |
| RHD4CZ5A014PT2201 | PC works for Wash out Valve Chambers for Potable Water Network - (RD-A-1 /4)-Z5-A014-PT | 2027-03-08 → 2027-03-04 (-4d) | 2027-03-14 → 2027-03-06 (-8d) |  | -170.02d → -167d |
| RHD4CZ5A014PT2301 | Installation for Wash out Valve Chambers for Potable Water Network - (RD-A-1 /4)-Z5-A014-PT | 2027-03-14 → 2027-03-07 (-7d) | 2027-03-16 → 2027-03-08 (-8d) |  | -170.02d → -167d |
| RHD4CZ5A014PT2401 | Backfilling works for Wash out Valve Chambers for Potable Water Network - (RD-A-1 /4)-Z5-A014-PT | 2027-03-16 → 2027-03-13 (-3d) | 2027-03-22 → 2027-03-17 (-5d) |  | -170.02d → -167d |
| 3651 | **RHD4-02-002-A014-(IRR)-HDPE Pipes - 250 mm diameter** | 2027-02-09 → 2027-02-10 (+1d) |  |  |  |
| RHD4CZ5A014IRR1103 | Excavation works for HDPE Pipline 250 mm - (RD-A-1 /4)-Z5-A014-IRR | 2027-02-09 → 2027-02-10 (+1d) |  |  | -177.02d → -178d |
| RHD4CZ5A014IRR1203 | Bedding works for HDPE Pipline 250 mm - (RD-A-1 /4)-Z5-A014-IRR | 2027-02-17 → 2027-02-18 (+1d) |  |  | -171.02d → -172d |
| RHD4CZ5A014IRR1303 | Installing for HDPE Pipline 250 mm - (RD-A-1 /4)-Z5-A014-IRR | 2027-02-25 → 2027-02-27 (+2d) |  |  | -171.02d → -172d |
| RHD4CZ5A014IRR1403 | Primary Test for HDPE Pipline 250 mm - (RD-A-1 /4)-Z5-A014-IRR | 2027-03-06 → 2027-03-07 (+1d) |  |  | -171.02d → -172d |
| RHD4CZ5A014IRR1503 | Backfilling and warning tape works for HDPE Pipline 250 mm - (RD-A-1 /4)-Z5-A014-IRR | 2027-03-20 → 2027-03-21 (+1d) |  |  | -177.02d → -178d |
| 1770 | **RHD4-02-002-A014-(IRR)-Air Valves** | 2027-02-25 → 2027-02-27 (+2d) |  |  |  |
| RHD4CZ5A014IRR3103 | Installation for Air Valves for Irrigation Network - (RD-A-1 /4)-Z5-A014-IRR | 2027-02-25 → 2027-02-27 (+2d) |  |  | -162.02d → -163d |
| RHD4CZ5A014IRR3203 | Stem and Service box for Air Valves for Irrigation Network - (RD-A-1 /4)-Z5-A014-IRR | 2027-02-28 → 2027-03-01 (+1d) |  |  | -162.02d → -163d |
| RHD4CZ5A014IRR1400 | Primary Test for HDPE Pipline 160 mm - (RD-A-1 /4)-Z5-A014-IRR | 2027-02-17 → 2027-02-18 (+1d) |  |  | -162.02d → -163d |
| 6115 | **RHD4-02-002-A014-(IRR)-Gate Valves (Direct Buried)** | 2027-02-17 → 2027-02-18 (+1d) |  |  |  |
| RHD4CZ5A014IRR3100 | Installation for Direct Buried Gate Valves - (RD-A-1 /4)-Z5-A014-IRR | 2027-02-17 → 2027-02-18 (+1d) |  |  | -158.02d → -159d |
| RHD4CZ5A014IRR3200 | Stem and Service box for Direct Buried Gate Valves - (RD-A-1 /4)-Z5-A014-IRR | 2027-02-21 → 2027-02-23 (+2d) |  |  | -158.02d → -159d |
| 1769 | **RHD4-02-002-A014-(IRR)-Air Valve Chamber** | 2027-02-17 → 2027-02-18 (+1d) |  |  |  |
| RHD4CZ5A014IRR2102 | Excavation and Bedding for Valve Chamber for Irrigation Network - (RD-A-1 /4)-Z5-A014-IRR | 2027-02-17 → 2027-02-18 (+1d) |  |  | -162.02d → -163d |
| RHD4CZ5A014IRR2202 | PC works for Valve Chamber for Irrigation Network - (RD-A-1 /4)-Z5-A014-IRR | 2027-02-20 → 2027-02-21 (+1d) |  |  | -162.02d → -163d |
| RHD4CZ5A014IRR2302 | Installation for Valve Chamber for Irrigation Network - (RD-A-1 /4)-Z5-A014-IRR | 2027-02-23 → 2027-02-24 (+1d) |  |  | -162.02d → -163d |
| RHD4CZ5A014IRR2402 | Backfilling works for Valve Chamber for Irrigation Network - (RD-A-1 /4)-Z5-A014-IRR | 2027-02-25 → 2027-02-27 (+2d) |  |  | -162.02d → -163d |
| 3681 | **RHD4-02-002-Z5-A014-Medium Voltage Network - MV** |  | 2027-09-07 → 2027-09-05 (-2d) |  |  |
| 3682 | **RHD4-02-002-A014-(MV)-Medium Voltage cable trench** | 2027-07-17 → 2027-07-15 (-2d) | 2027-09-07 → 2027-09-05 (-2d) |  |  |
| RHD4CZ5A014MV1100 | Excavation for Medium Voltage Trench - (RD-A-1 /4)-Z5-A014-MV | 2027-07-17 → 2027-07-15 (-2d) | 2027-07-24 → 2027-07-21 (-3d) |  | -153.02d → -152d |
| RHD4CZ5A014MV1200 | Trench Backfilling for Medium Voltage Network - (RD-A-1 /4)-Z5-A014-MV | 2027-08-31 → 2027-08-30 (-1d) | 2027-09-07 → 2027-09-05 (-2d) |  | -109.02d → -108d |

| ID | Task | Start | Finish | Total float |
| --- | --- | --- | --- | --- |
| 3684 | **RHD4-02-002-A014-(MV)-Medium Voltage cables 3Cx 500 mm²** | 2027-07-24 → 2027-07-22 (-2d) | 2027-08-25 → 2027-08-23 (-2d) |  |
| RHD4CZ5A014MV3100 | Installation of Medium Voltage Cables 3Cx 500 mm² - (RD-A-1 /4)-Z5-A014-MV | 2027-07-24 → 2027-07-22 (-2d) | 2027-08-07 → 2027-08-04 (-3d) | -109.02d → -108d |
| RHD4CZ5A014MV3200 | Joints Installation of Medium Voltage Cables 3Cx 500 mm² - (RD-A-1 /4)-Z5-A014-MV | 2027-08-07 → 2027-08-05 (-2d) | 2027-08-14 → 2027-08-11 (-3d) | -109.02d → -108d |
| RHD4CZ5A014MV3300 | Testing of Medium Voltage Cables 3Cx 500 mm² - (RD-A-1 /4)-Z5-A014-MV | 2027-08-14 → 2027-08-12 (-2d) | 2027-08-23 → 2027-08-21 (-2d) | -109.02d → -108d |
| RHD4CZ5A014MV3400 | Termination of Medium Voltage Cables 3Cx 500 mm² - (RD-A-1 /4)-Z5-A014-MV | 2027-08-23 → 2027-08-22 (-1d) | 2027-08-25 → 2027-08-23 (-2d) | -108.02d → -107d |
| 3685 | **RHD4-02-002-A014-(MV)-Medium Voltage cables 3Cx 50 mm²** | 2027-08-23 → 2027-08-22 (-1d) | 2027-08-26 → 2027-08-24 (-2d) |  |
| RHD4CZ5A014MV3401 | Termination of Medium Voltage Cables 3Cx 50 mm² - (RD-A-1 /4)-Z5-A014-MV | 2027-08-23 → 2027-08-22 (-1d) | 2027-08-26 → 2027-08-24 (-2d) | -109.02d → -108d |
| 3686 | **RHD4-02-002-A014-(MV)-Normally open Point (Outdoor Type)** | 2027-08-26 → 2027-08-25 (-1d) | 2027-08-31 → 2027-08-29 (-2d) |  |
| RHD4CZ5A014MV4100 | Installation for Normally open Point - (RD-A-1 /4)-Z5-A014-MV | 2027-08-26 → 2027-08-25 (-1d) | 2027-08-29 → 2027-08-26 (-3d) | -109.02d → -108d |
| RHD4CZ5A014MV4200 | Termination for Normally open Point - (RD-A-1 /4)-Z5-A014-MV | 2027-08-29 → 2027-08-28 (-1d) | 2027-08-31 → 2027-08-29 (-2d) | -109.02d → -108d |
| 4255 | **RHD4-02-002-Z5-A014-Low Voltage Network - LV** | 2027-02-23 → 2027-02-24 (+1d) | 2027-10-07 → 2027-10-05 (-2d) |  |
| 4256 | **RHD4-02-002-A014-(LV)-Low Voltage duct banks** | 2027-02-23 → 2027-02-24 (+1d) |  |  |
| RHD4CZ5A014LV2100 | Excavation of Duct Banks for Low Voltage Network - (RD-A-1 /4)-Z5-A014-LV | 2027-02-23 → 2027-02-24 (+1d) |  | -168.02d → -169d |
| RHD4CZ5A014LV2200 | Installation of Duct Banks for Low Voltage Network - (RD-A-1 /4)-Z5-A014-LV | 2027-02-28 → 2027-03-01 (+1d) |  | -168.02d → -169d |
| RHD4CZ5A014LV2300 | Pouring of Duct Banks for Low Voltage Network - (RD-A-1 /4)-Z5-A014-LV | 2027-03-07 → 2027-03-08 (+1d) |  | -168.02d → -169d |
| RHD4CZ5A014LV2400 | Backfilling of Duct Banks for Low Voltage Network - (RD-A-1 /4)-Z5-A014-LV | 2027-03-15 → 2027-03-16 (+1d) |  | -168.02d → -169d |
| 4257 | **RHD4-02-002-A014-(LV)-Low Voltage Drawpit** | 2027-09-07 → 2027-09-06 (-1d) | 2027-09-12 → 2027-09-09 (-3d) |  |
| RHD4CZ5A014LV5100 | Excavation of Drawpit size 900x900x1000mm for Low Voltage Network - (RD-A-1 /4)-Z5-A014-LV | 2027-09-07 → 2027-09-06 (-1d) | 2027-09-09 → 2027-09-07 (-2d) | -109.02d → -108d |
| RHD4CZ5A014LV5200 | Installation of Drawpit size 900x900x1000mm for Low Voltage Network - (RD-A-1 /4)-Z5-A014-LV | 2027-09-09 → 2027-09-08 (-1d) | 2027-09-12 → 2027-09-09 (-3d) | -109.02d → -108d |
| 4258 | **RHD4-02-002-A014-(LV)-Low Voltage cables** | 2027-09-12 → 2027-09-11 (-1d) | 2027-10-04 → 2027-10-02 (-2d) |  |
| RHD4CZ5A014LV3100 | Excavation for Low Voltage Cables for Low Voltage Network - (RD-A-1 /4)-Z5-A014-LV | 2027-09-12 → 2027-09-11 (-1d) | 2027-09-18 → 2027-09-15 (-3d) | -109.02d → -108d |
| RHD4CZ5A014LV3200 | Cable Laying of Low Voltage Cables for Low Voltage Network - (RD-A-1 /4)-Z5-A014-LV | 2027-09-18 → 2027-09-16 (-2d) | 2027-09-25 → 2027-09-21 (-4d) | -109.02d → -108d |
| RHD4CZ5A014LV3300 | Warning tape and Backfill for Low Voltage Cables for Low Voltage Network - (RD-A-1 /4)-Z5-A014-LV | 2027-09-25 → 2027-09-22 (-3d) | 2027-09-30 → 2027-09-28 (-2d) | -109.02d → -108d |
| RHD4CZ5A014LV3400 | Testing of Low Voltage Cables for Low Voltage Network - (RD-A-1 /4)-Z5-A014-LV | 2027-09-30 → 2027-09-29 (-1d) | 2027-10-04 → 2027-10-02 (-2d) | -108.02d → -107d |
| 4259 | **RHD4-02-002-A014-(LV)-Low Voltage Distribution Pillars** | 2027-09-30 → 2027-09-29 (-1d) | 2027-10-07 → 2027-10-05 (-2d) |  |
| RHD4CZ5A014LV4100 | Leveling for Distribution Pillars for Low Voltage Network - (RD-A-1 /4)-Z5-A014-LV | 2027-09-30 → 2027-09-29 (-1d) | 2027-10-03 → 2027-09-30 (-3d) | -109.02d → -108d |
| RHD4CZ5A014LV4200 | Lean Concrete for Distribution Pillars for Low Voltage Network - (RD-A-1 /4)-Z5-A014-LV | 2027-10-03 → 2027-10-02 (-1d) | 2027-10-05 → 2027-10-03 (-2d) | -109.02d → -108d |
| RHD4CZ5A014LV4300 | Installation of Distribution Pillars for Low Voltage Network - (RD-A-1 /4)-Z5-A014-LV | 2027-10-05 → 2027-10-04 (-1d) | 2027-10-07 → 2027-10-05 (-2d) | -109.02d → -108d |
| 3694 | **RHD4-02-002-Z5-A014-Street Lighting Network - SL** | 2027-02-28 → 2027-03-01 (+1d) | 2027-11-10 → 2027-11-08 (-2d) |  |
| 3695 | **RHD4-02-002-A014-(SL)-Street Lighting duct banks** | 2027-02-28 → 2027-03-01 (+1d) |  |  |
| RHD4CZ5A014SL2100 | Excavation of Duct Banks for Street Lighting Network - (RD-A-1 /4)-Z5-A014-SL | 2027-02-28 → 2027-03-01 (+1d) |  | -168.02d → -169d |
| RHD4CZ5A014SL2200 | Installation of Duct Banks for Street Lighting Network - (RD-A-1 /4)-Z5-A014-SL | 2027-03-02 → 2027-03-03 (+1d) |  | -168.02d → -169d |
| RHD4CZ5A014SL2300 | Pouring of Duct Banks for Street Lighting Network - (RD-A-1 /4)-Z5-A014-SL | 2027-03-07 → 2027-03-08 (+1d) |  | -168.02d → -169d |
| RHD4CZ5A014SL2400 | Backfilling of Duct Banks for Street Lighting Network - (RD-A-1 /4)-Z5-A014-SL | 2027-03-15 → 2027-03-16 (+1d) |  | -168.02d → -169d |
| 3696 | **RHD4-02-002-A014-(SL)-Street Lighting Drawpit** | 2027-10-07 → 2027-10-06 (-1d) | 2027-10-12 → 2027-10-10 (-2d) |  |
| RHD4CZ5A014SL5100 | Excavation of Drawpit size 600x600x900mm for Street Lighting Network - (RD-A-1 /4)-Z5-A014-SL | 2027-10-07 → 2027-10-06 (-1d) | 2027-10-10 → 2027-10-07 (-3d) | -109.02d → -108d |
| RHD4CZ5A014SL5200 | Installation of Drawpit size 600x600x900mm for Street Lighting Network - (RD-A-1 /4)-Z5-A014-SL | 2027-10-10 → 2027-10-09 (-1d) | 2027-10-12 → 2027-10-10 (-2d) | -109.02d → -108d |
| 3698 | **RHD4-02-002-A014-(SL)-Street Lighting Poles** | 2027-10-12 → 2027-10-11 (-1d) | 2027-11-04 → 2027-11-02 (-2d) |  |
| RHD4CZ5A014SL1100 | Excavation for RC Base for Lighting Poles for Street Lighting Network - (RD-A-1 /4)-Z5-A014-SL | 2027-10-12 → 2027-10-11 (-1d) | 2027-10-16 → 2027-10-13 (-3d) | -109.02d → -108d |
| RHD4CZ5A014SL1200 | Installation for RC Base for Lighting Poles for Street Lighting Network - (RD-A-1 /4)-Z5-A014-SL | 2027-10-16 → 2027-10-14 (-2d) | 2027-10-19 → 2027-10-17 (-2d) | -109.02d → -108d |
| RHD4CZ5A014SL1300 | Backfill for RC Base for Lighting Poles for Street Lighting Network - (RD-A-1 /4)-Z5-A014-SL | 2027-10-19 → 2027-10-18 (-1d) | 2027-10-23 → 2027-10-20 (-3d) | -109.02d → -108d |
| RHD4CZ5A014SL1400 | Installation for Lighting Poles for Street Lighting Network - (RD-A-1 /4)-Z5-A014-SL | 2027-10-23 → 2027-10-21 (-2d) | 2027-10-27 → 2027-10-25 (-2d) | -107.02d → -106d |
| RHD4CZ5A014SL1500 | Luminaire Installation for Lighting Poles for Street Lighting Network - (RD-A-1 /4)-Z5-A014-SL | 2027-10-30 → 2027-10-28 (-2d) | 2027-11-04 → 2027-11-02 (-2d) | -107.02d → -106d |
| 3697 | **RHD4-02-002-A014-(SL)-Street Lighting cables** | 2027-10-23 → 2027-10-21 (-2d) | 2027-11-10 → 2027-11-08 (-2d) |  |
| RHD4CZ5A014SL3100 | Excavation for Street Lighting Cables for Street Lighting Network - (RD-A-1 /4)-Z5-A014-SL | 2027-10-23 → 2027-10-21 (-2d) | 2027-10-28 → 2027-10-26 (-2d) | -109.02d → -108d |
| RHD4CZ5A014SL3200 | Cable Laying of Street Lighting Cables for Street Lighting Network - (RD-A-1 /4)-Z5-A014-SL | 2027-10-28 → 2027-10-27 (-1d) | 2027-11-02 → 2027-10-31 (-2d) | -109.02d → -108d |
| RHD4CZ5A014SL3300 | Warning tape and Backfill for Street Lighting Cables for Street Lighting Network - (RD-A-1 /4)-Z5-A014-SL | 2027-11-02 → 2027-11-01 (-1d) | 2027-11-07 → 2027-11-04 (-3d) | -109.02d → -108d |
| RHD4CZ5A014SL3400 | Testing of Street Lighting Cables for Street Lighting Network - (RD-A-1 /4)-Z5-A014-SL | 2027-11-07 → 2027-11-06 (-1d) | 2027-11-10 → 2027-11-08 (-2d) | -109.02d → -108d |
| 3700 | **RHD4-02-002-A014-(SL)-Street Lighting Earthing System** | 2027-10-27 → 2027-10-26 (-1d) | 2027-10-30 → 2027-10-27 (-3d) |  |
| RHD4CZ5A014SL6100 | Installation of Earthing for Lighting Poles and Fedder Pillers for Street Lighting Network - (RD-A-1 /4)-Z5-A014-SL | 2027-10-27 → 2027-10-26 (-1d) | 2027-10-30 → 2027-10-27 (-3d) | -107.02d → -106d |
| 3706 | **RHD4-02-002-Z5-A014-Telecommunications Network - TC** | 2027-11-10 → 2027-11-09 (-1d) | 2027-12-08 → 2027-12-06 (-2d) |  |
| 3707 | **RHD4-02-002-A014-(TC)-Telecommunications Ducts** | 2027-11-10 → 2027-11-09 (-1d) | 2027-12-04 → 2027-12-01 (-3d) |  |
| RHD4CZ5A014TC2100 | Excavation of HDPE Ducts for Telecom Network - (RD-A-1 /4)-Z5-A014-TC | 2027-11-10 → 2027-11-09 (-1d) | 2027-11-17 → 2027-11-15 (-2d) | -109.02d → -108d |
| RHD4CZ5A014TC2200 | Installation of HDPE Ducts for Telecom Network - (RD-A-1 /4)-Z5-A014-TC | 2027-11-17 → 2027-11-16 (-1d) | 2027-11-27 → 2027-11-24 (-3d) | -109.02d → -108d |
| RHD4CZ5A014TC2400 | Backfilling of HDPE Ducts for Telecom Network - (RD-A-1 /4)-Z5-A014-TC | 2027-11-27 → 2027-11-25 (-2d) | 2027-12-04 → 2027-12-01 (-3d) | -109.02d → -108d |
| 3708 | **RHD4-02-002-A014-(TC)-Telecommunications Manholes** | 2027-12-04 → 2027-12-02 (-2d) | 2027-12-08 → 2027-12-06 (-2d) |  |
| RHD4CZ5A014TC5100 | Excavation for Manholes for Telecom Network - (RD-A-1 /4)-Z5-A014-TC | 2027-12-04 → 2027-12-02 (-2d) | 2027-12-06 → 2027-12-04 (-2d) | -109.02d → -108d |
| RHD4CZ5A014TC5200 | Installation of Manholes for Telecom Network - (RD-A-1 /4)-Z5-A014-TC | 2027-12-06 → 2027-12-05 (-1d) | 2027-12-08 → 2027-12-06 (-2d) | -109.02d → -108d |
| 3710 | **RHD4-02-002-Z5-A014-Information and Communication Technologies - ICT** | 2027-12-08 → 2027-12-07 (-1d) | 2028-02-08 → 2028-02-06 (-2d) |  |
| 3711 | **RHD4-02-002-A014-(ICT)-Information and Communication Technologies Ducts** | 2027-12-08 → 2027-12-07 (-1d) | 2028-01-30 → 2028-01-27 (-3d) |  |
| RHD4CZ5A014ICT2100 | Excavation of HDPE Ducts for ICT Network - (RD-A-1 /4)-Z5-A014-ICT | 2027-12-08 → 2027-12-07 (-1d) | 2027-12-23 → 2027-12-21 (-2d) | -109.02d → -108d |
| RHD4CZ5A014ICT2200 | Installation of HDPE Ducts for ICT Network - (RD-A-1 /4)-Z5-A014-ICT | 2027-12-23 → 2027-12-22 (-1d) | 2028-01-15 → 2028-01-12 (-3d) | -109.02d → -108d |
| RHD4CZ5A014ICT2400 | Backfilling of HDPE Ducts for ICT Network - (RD-A-1 /4)-Z5-A014-ICT | 2028-01-15 → 2028-01-13 (-2d) | 2028-01-30 → 2028-01-27 (-3d) | -109.02d → -108d |
| 3712 | **RHD4-02-002-A014-(ICT)-Information and Communication Technologies Manholes** | 2028-01-30 → 2028-01-29 (-1d) | 2028-02-08 → 2028-02-06 (-2d) |  |
| RHD4CZ5A014ICT5100 | Excavation for Manholes for ICT Network - (RD-A-1 /4)-Z5-A014-ICT | 2028-01-30 → 2028-01-29 (-1d) | 2028-02-03 → 2028-02-01 (-2d) | -109.02d → -108d |
| RHD4CZ5A014ICT5200 | Installation of Manholes for ICT Network - (RD-A-1 /4)-Z5-A014-ICT | 2028-02-03 → 2028-02-02 (-1d) | 2028-02-08 → 2028-02-06 (-2d) | -109.02d → -108d |
| 3714 | **RHD4-02-002-Z5-A014-Security Network - CCTV** | 2028-02-08 → 2028-02-07 (-1d) | 2028-02-20 → 2028-02-19 (-1d) |  |
| 2959 | **RHD4-02-002-A014-(CCTV)-CCTV Poles** | 2028-02-08 → 2028-02-07 (-1d) | 2028-02-20 → 2028-02-19 (-1d) |  |
| RHD4CZ5A014CCTV1100 | Excavation for RC Base for CCTV Poles for Security Network - (RD-A-1 /4)-Z5-A014-CCTV | 2028-02-08 → 2028-02-07 (-1d) | 2028-02-10 → 2028-02-08 (-2d) | -99.06d → -98.04d |
| RHD4CZ5A014CCTV1200 | Installation for RC Base for CCTV Poles for Security Network - (RD-A-1 /4)-Z5-A014-CCTV | 2028-02-10 → 2028-02-09 (-1d) | 2028-02-13 → 2028-02-10 (-3d) | -99.06d → -98.04d |

| ID | Task | Start | Finish | Complete | Total float |
| --- | --- | --- | --- | --- | --- |
| RHD4CZ5A014CCTV1300 | Backfill for RC Base for CCTV Poles for Security Network - (RD-A-1 /4)-Z5-A014-CCTV | 2028-02-13 → 2028-02-12 (-1d) | 2028-02-15 → 2028-02-14 (-1d) |  | -99.06d → -98.04d |
| RHD4CZ5A014CCTV1400 | Installation for CCTV Poles for Security Network - (RD-A-1 /4)-Z5-A014-CCTV | 2028-02-15 → 2028-02-14 (-1d) | 2028-02-17 → 2028-02-16 (-1d) |  | -99.06d → -98.04d |
| RHD4CZ5A014CCTV1500 | Protection post Installation for CCTV Poles for Security Network - (RD-A-1 /4)-Z5-A014-CCTV | 2028-02-17 → 2028-02-16 (-1d) | 2028-02-20 → 2028-02-19 (-1d) |  | -99.06d → -98.04d |
| 3353 | **RHD4-02-002-Z5-L07** |  | 2028-07-08 → 2028-06-29 (-9d) |  |  |
| 3532 | **RHD4-02-002-Z5-L07-Road Works - RD** |  | 2028-07-08 → 2028-06-29 (-9d) |  |  |
| 3534 | **RHD4-02-002-L07-(RD)-Aggregate Base Course** |  | 2027-03-02 → 2026-11-10 (-112d) |  |  |
| RHD4CZ5L07RD2100 | Supply, lay and compaction Aggregate base course compacted thickness 300 mmfor Roads - (RD-L-7)-Z5-L07-RD |  | 2027-03-02 → 2026-11-10 A (-112d) | 50% → 100% | -181d → none |
| 3535 | **RHD4-02-002-L07-(RD)-Bituminous base course Two Layers, including (MC1)&(RC2)** | 2027-03-03 → 2026-11-10 (-113d) | 2028-06-11 → 2028-06-03 (-8d) |  |  |
| RHD4CZ5L07RD3100 | Supply, lay and Asphaltic base course including Prime Coat (MC1) for 1st Layer - (RD-L-7)-Z5-L07-RD | 2027-03-03 → 2026-11-10 A (-113d) | 2027-03-04 → 2026-11-11 A (-113d) | 0% → 100% | -181d → none |
| RHD4CZ5L07RD3200 | Supply, lay and Asphaltic base course including Tack Coat (RC2) for 2nd Layer - (RD-L-7)-Z5-L07-RD | 2028-06-10 → 2028-06-01 (-9d) | 2028-06-11 → 2028-06-03 (-8d) |  | -147d → -140d |
| 3537 | **RHD4-02-002-L07-(RD)-Precast Concrete Curb** | 2028-06-12 → 2028-06-04 (-8d) | 2028-06-18 → 2028-06-10 (-8d) |  |  |
| RHD4CZ5L07RD5100 | Supply and installation Precast Concrete Kerb for Roads - (RD-L-7)-Z5-L07-RD | 2028-06-12 → 2028-06-04 (-8d) | 2028-06-18 → 2028-06-10 (-8d) |  | -147d → -140d |
| 3540 | **RHD4-02-002-L07-(RD)-Traffic Signage** | 2028-06-19 → 2028-06-11 (-8d) | 2028-06-25 → 2028-06-17 (-8d) |  |  |
| RHD4CZ5L07RD8100 | Installation of Traffic Signage for Road Network - (RD-L-7)-Z5-L07-RD | 2028-06-19 → 2028-06-11 (-8d) | 2028-06-25 → 2028-06-17 (-8d) |  | -147d → -140d |
| 3538 | **RHD4-02-002-L07-(RD)-Precast Interlocking Block Pavers** | 2028-06-26 → 2028-06-18 (-8d) | 2028-07-02 → 2028-06-24 (-8d) |  |  |
| RHD4CZ5L07RD6100 | Interlocking block pavers for sidewalk-footpath for Side walks and Parking areas - (RD-L-7)-Z5-L07-RD | 2028-06-26 → 2028-06-18 (-8d) | 2028-07-02 → 2028-06-24 (-8d) |  | -147d → -140d |
| 3536 | **RHD4-02-002-L07-(RD)-Bituminous concrete wearing course including tack coat (RC2)** | 2028-07-03 → 2028-06-25 (-8d) | 2028-07-04 → 2028-06-26 (-8d) |  |  |
| RHD4CZ5L07RD4100 | Supply, lay and compaction Asphaltic wearing course including tack Coat (RC2)for Road Network - (RD-L-7)-Z5-L07-RD | 2028-07-03 → 2028-06-25 (-8d) | 2028-07-04 → 2028-06-26 (-8d) |  | -147d → -140d |
| 3539 | **RHD4-02-002-L07-(RD)-Pavement Marking** | 2028-07-05 → 2028-06-27 (-8d) | 2028-07-08 → 2028-06-29 (-9d) |  |  |
| RHD4CZ5L07RD7100 | Pavement Markings for Road Network - (RD-L-7)-Z5-L07-RD | 2028-07-05 → 2028-06-27 (-8d) | 2028-07-08 → 2028-06-29 (-9d) |  | -147d → -140d |
| 3357 | **RHD4-02-002-Z5-L07-Storm Network - ST** |  | 2027-01-14 → 2027-01-21 (+7d) |  |  |
| 3375 | **RHD4-02-002-L07-(ST)-MH Works - 1500 mm diameter** |  | 2027-01-05 → 2027-01-12 (+7d) |  |  |
| RHD4CZ5L07ST3401 | Steel Cover for MH 1500 mm - (RD-L-7)-Z5-L07-ST | 2027-01-02 → 2027-01-09 (+7d) | 2027-01-03 → 2027-01-10 (+7d) |  | -129d → -135d |
| RHD4CZ5L07ST3501 | Finishing, Benching, Testing works for MH 1500 mm - (RD-L-7)-Z5-L07-ST | 2027-01-04 → 2027-01-11 (+7d) | 2027-01-05 → 2027-01-12 (+7d) |  | -128d → -134d |
| 3376 | **RHD4-02-002-L07-(ST)-MH Works - 2000 mm diameter** |  | 2027-01-07 → 2027-01-14 (+7d) |  |  |
| RHD4CZ5L07ST3402 | Steel Cover for MH 2000 mm - (RD-L-7)-Z5-L07-ST | 2027-01-02 → 2027-01-09 (+7d) | 2027-01-04 → 2027-01-11 (+7d) |  | -129d → -135d |
| RHD4CZ5L07ST3502 | Finishing, Benching, Testing works for MH 2000 mm - (RD-L-7)-Z5-L07-ST | 2027-01-05 → 2027-01-12 (+7d) | 2027-01-07 → 2027-01-14 (+7d) |  | -129d → -135d |
| 3374 | **RHD4-02-002-L07-(ST)-MH Works - 1200 mm diameter** |  | 2027-01-05 → 2027-01-12 (+7d) |  |  |
| RHD4CZ5L07ST3400 | Steel Cover for MH 1200 mm - (RD-L-7)-Z5-L07-ST | 2027-01-02 → 2027-01-09 (+7d) | 2027-01-03 → 2027-01-10 (+7d) |  | -174d → -178d |
| RHD4CZ5L07ST3500 | Finishing, Benching, Testing works for MH 1200 mm - (RD-L-7)-Z5-L07-ST | 2027-01-04 → 2027-01-11 (+7d) | 2027-01-05 → 2027-01-12 (+7d) |  | -174d → -178d |
| 3366 | **RHD4-02-002-L07-(ST)-GRP Pipes - 1200 mm diameter** |  | 2027-01-03 → 2027-01-10 (+7d) |  |  |
| RHD4CZ5L07ST1408 | Primary Test for GRP Pipe Line 1200 mm - (RD-L-7)-Z5-L07-ST | 2027-01-02 → 2027-01-09 (+7d) | 2027-01-03 → 2027-01-10 (+7d) |  | -149d → -155d |
| 3365 | **RHD4-02-002-L07-(ST)-GRP Pipes - 1100 mm diameter** |  | 2027-01-03 → 2027-01-10 (+7d) |  |  |
| RHD4CZ5L07ST1407 | Primary Test for GRP Pipe Line 1100 mm - (RD-L-7)-Z5-L07-ST | 2027-01-02 → 2027-01-09 (+7d) | 2027-01-03 → 2027-01-10 (+7d) |  | -149d → -155d |
| 3364 | **RHD4-02-002-L07-(ST)-GRP Pipes - 1000 mm diameter** |  | 2027-01-03 → 2027-01-10 (+7d) |  |  |
| RHD4CZ5L07ST1406 | Primary Test for GRP Pipe Line 1000 mm - (RD-L-7)-Z5-L07-ST | 2027-01-02 → 2027-01-09 (+7d) | 2027-01-03 → 2027-01-10 (+7d) |  | -149d → -155d |
| 3361 | **RHD4-02-002-L07-(ST)-GRP Pipes - 700 mm diameter** |  | 2027-01-03 → 2027-01-10 (+7d) |  |  |
| RHD4CZ5L07ST1403 | Primary Test for GRP Pipe Line 700 mm - (RD-L-7)-Z5-L07-ST | 2027-01-02 → 2027-01-09 (+7d) | 2027-01-03 → 2027-01-10 (+7d) |  | -149d → -155d |
| 3359 | **RHD4-02-002-L07-(ST)-GRP Pipes - 500 mm diameter** |  | 2027-01-03 → 2027-01-10 (+7d) |  |  |
| RHD4CZ5L07ST1401 | Primary Test for GRP Pipe Line 500 mm - (RD-L-7)-Z5-L07-ST | 2027-01-02 → 2027-01-09 (+7d) | 2027-01-03 → 2027-01-10 (+7d) |  | -149d → -155d |
| 3373 | **RHD4-02-002-L07-(ST)-UPVC Pipes - 400 mm diameter** | 2027-01-04 → 2027-01-11 (+7d) | 2027-01-14 → 2027-01-21 (+7d) |  |  |
| RHD4CZ5L07ST2101 | Excavation works for UPVC Pipe Line 400 mm - (RD-L-7)-Z5-L07-ST | 2027-01-04 → 2027-01-11 (+7d) | 2027-01-05 → 2027-01-12 (+7d) |  | -159d → -165d |
| RHD4CZ5L07ST2201 | Bedding works for UPVC Pipe Line 400 mm - (RD-L-7)-Z5-L07-ST | 2027-01-06 → 2027-01-13 (+7d) | 2027-01-07 → 2027-01-14 (+7d) |  | -159d → -165d |
| RHD4CZ5L07ST2301 | Installing for UPVC Pipe Line 400 mm - (RD-L-7)-Z5-L07-ST | 2027-01-09 → 2027-01-16 (+7d) | 2027-01-10 → 2027-01-17 (+7d) |  | -159d → -165d |
| RHD4CZ5L07ST2401 | Primary Test for UPVC Pipe Line 400 mm - (RD-L-7)-Z5-L07-ST | 2027-01-11 → 2027-01-18 (+7d) | 2027-01-12 → 2027-01-19 (+7d) |  | -159d → -165d |
| RHD4CZ5L07ST2501 | Backfilling and warning tape works for UPVC Pipe Line 400 mm - (RD-L-7)-Z5-L07-ST | 2027-01-13 → 2027-01-20 (+7d) | 2027-01-14 → 2027-01-21 (+7d) |  | -159d → -165d |
| 3372 | **RHD4-02-002-L07-(ST)-UPVC Pipes - 300 mm diameter** |  | 2027-01-12 → 2027-01-19 (+7d) |  |  |
| RHD4CZ5L07ST2400 | Primary Test for UPVC Pipe Line 300 mm - (RD-L-7)-Z5-L07-ST | 2027-01-11 → 2027-01-18 (+7d) | 2027-01-12 → 2027-01-19 (+7d) |  | -157d → -163d |
| 3380 | **RHD4-02-002-L07-(ST)-Concrete Encasement** | 2027-01-11 → 2027-01-18 (+7d) | 2027-01-12 → 2027-01-19 (+7d) |  |  |
| RHD4CZ5L07ST6100 | Pipe Encasement for Storm Pipelines - (RD-L-7)-Z5-L07-ST | 2027-01-11 → 2027-01-18 (+7d) | 2027-01-12 → 2027-01-19 (+7d) |  | -159d → -165d |
| 3381 | **RHD4-02-002-Z5-L07-Catch Basin - ST** |  | 2027-01-10 → 2027-01-17 (+7d) |  |  |
| 3382 | **RHD4-02-002-L07-(ST)-Single Catch Basin Works** |  | 2027-01-10 → 2027-01-17 (+7d) |  |  |
| RHD4CZ5L07ST7400 | Steel Cover for Single Catch Basin - (RD-L-7)-Z5-L07-ST | 2027-01-02 → 2027-01-09 (+7d) | 2027-01-04 → 2027-01-11 (+7d) |  | -160d → -166d |
| RHD4CZ5L07ST7500 | Finishing and Insulation works for Single Catch Basin - (RD-L-7)-Z5-L07-ST | 2027-01-05 → 2027-01-12 (+7d) | 2027-01-10 → 2027-01-17 (+7d) |  | -160d → -166d |
| 3383 | **RHD4-02-002-L07-(ST)-Double Catch Basin Works** |  | 2027-01-07 → 2027-01-14 (+7d) |  |  |
| RHD4CZ5L07ST8300 | Rings & C.Slab & Final Backfillfor Double Catch Basin - (RD-L-7)-Z5-L07-ST | 2027-01-02 → 2027-01-09 (+7d) | 2027-01-03 → 2027-01-10 (+7d) |  | -161d → -167d |
| RHD4CZ5L07ST8400 | Steel Cover for Double Catch Basin - (RD-L-7)-Z5-L07-ST | 2027-01-04 → 2027-01-11 (+7d) | 2027-01-05 → 2027-01-12 (+7d) |  | -161d → -167d |
| RHD4CZ5L07ST8500 | Finishing and Insulation works for Double Catch Basin - (RD-L-7)-Z5-L07-ST | 2027-01-06 → 2027-01-13 (+7d) | 2027-01-07 → 2027-01-14 (+7d) |  | -161d → -167d |
| 3406 | **RHD4-02-002-Z5-L07-Sewage Network - SW** |  | 2027-06-07 → 2027-06-08 (+1d) |  |  |
| 3416 | **RHD4-02-002-L07-(SW)-MH Works - 1200 mm diameter** |  | 2027-06-07 → 2027-06-08 (+1d) |  |  |
| RHD4CZ5L07SW3400 | Steel Cover for MH 1200 mm - (RD-L-7)-Z5-L07-SW | 2027-05-19 → 2027-05-20 (+1d) | 2027-05-26 → 2027-05-27 (+1d) |  | -159d → -160d |
| RHD4CZ5L07SW3500 | Finishing, Benching, Testing works for MH 1200 mm - (RD-L-7)-Z5-L07-SW | 2027-05-27 → 2027-05-29 (+2d) | 2027-06-07 → 2027-06-08 (+1d) |  | -159d → -160d |
| 3412 | **RHD4-02-002-L07-(SW)-UPVC Pipes - 200 mm diameter** |  | 2027-02-15 → 2027-02-10 (-5d) |  |  |
| RHD4CZ5L07SW2400 | Primary Test for UPVC Pipe Line 200 mm - (RD-L-7)-Z5-L07-SW |  | 2027-02-15 → 2027-02-10 (-5d) |  | -156.02d → -153d |
| 3443 | **RHD4-02-002-Z5-L07-Potable Network - PT** |  | 2027-05-02 → 2027-04-27 (-5d) |  |  |
| 3447 | **RHD4-02-002-L07-(PT)-HDPE Pipes - 400 mm diameter** | 2027-02-15 → 2026-10-31 (-107d) | 2027-02-28 → 2027-02-23 (-5d) |  |  |
| RHD4CZ5L07PT1103 | Excavation works for HDPE Pipline 400 mm - (RD-L-7)-Z5-L07-PT | 2027-02-15 → 2026-10-31 A (-107d) | 2027-02-17 → 2027-02-13 (-4d) | 0% → 50% | -156.02d → -153d |
| RHD4CZ5L07PT1203 | Bedding works for HDPE Pipline 400 mm - (RD-L-7)-Z5-L07-PT | 2027-02-17 → 2026-11-02 A (-107d) | 2027-02-20 → 2027-02-15 (-5d) | 0% → 50% | -156.02d → -153d |
| RHD4CZ5L07PT1303 | Installing for HDPE Pipline 400 mm - (RD-L-7)-Z5-L07-PT | 2027-02-20 → 2026-11-03 A (-109d) | 2027-02-23 → 2027-02-17 (-6d) | 0% → 50% | -156.02d → -153d |
| RHD4CZ5L07PT1503 | Backfilling and warning tape works for HDPE Pipline 400 mm - (RD-L-7)-Z5-L07-PT | 2027-02-25 → 2026-11-04 A (-113d) | 2027-02-28 → 2027-02-23 (-5d) | 0% → 50% | -156.02d → -153d |

| ID | Task | Start | Finish | Complete | Total float |
| --- | --- | --- | --- | --- | --- |
| RHD4CZ5L07PT1403 | Primary Test for HDPE Pipline 400 mm - (RD-L-7)-Z5-L07-PT | 2027-02-23 → 2027-02-18 (-5d) | 2027-02-25 → 2027-02-20 (-5d) |  | -156.02d → -153d |
| 2687 | **RHD4-02-002-L07-(PT)-HDPE Pipes - 110 mm diameter** | 2027-02-15 → 2027-02-11 (-4d) | 2027-02-28 → 2027-02-23 (-5d) |  |  |
| RHD4CZ5L07PT1100 | Excavation works for HDPE Pipline 110 mm - (RD-L-7)-Z5-L07-PT | 2027-02-15 → 2027-02-11 (-4d) | 2027-02-17 → 2027-02-13 (-4d) |  | -156.02d → -153d |
| RHD4CZ5L07PT1200 | Bedding works for HDPE Pipline 110 mm - (RD-L-7)-Z5-L07-PT | 2027-02-17 → 2027-02-14 (-3d) | 2027-02-20 → 2027-02-15 (-5d) |  | -124.02d → -121d |
| RHD4CZ5L07PT1300 | Installing for HDPE Pipline 110 mm - (RD-L-7)-Z5-L07-PT | 2027-02-20 → 2027-02-16 (-4d) | 2027-02-23 → 2027-02-17 (-6d) |  | -124.02d → -121d |
| RHD4CZ5L07PT1400 | Primary Test for HDPE Pipline 110 mm - (RD-L-7)-Z5-L07-PT | 2027-02-23 → 2027-02-18 (-5d) | 2027-02-25 → 2027-02-20 (-5d) |  | -124.02d → -121d |
| RHD4CZ5L07PT1500 | Backfilling and warning tape works for HDPE Pipline 110 mm - (RD-L-7)-Z5-L07-PT | 2027-02-25 → 2027-02-21 (-4d) | 2027-02-28 → 2027-02-23 (-5d) |  | -124.02d → -121d |
| 3445 | **RHD4-02-002-L07-(PT)-HDPE Pipes - 160 mm diameter** |  | 2027-04-03 → 2027-03-29 (-5d) |  |  |
| RHD4CZ5L07PT1101 | Excavation works for HDPE Pipline 160 mm - (RD-L-7)-Z5-L07-PT |  | 2027-02-23 → 2027-02-17 (-6d) |  | -152.02d → -149d |
| RHD4CZ5L07PT1201 | Bedding works for HDPE Pipline 160 mm - (RD-L-7)-Z5-L07-PT |  | 2027-02-28 → 2027-02-23 (-5d) |  | -152.02d → -149d |
| RHD4CZ5L07PT1301 | Installing for HDPE Pipline 160 mm - (RD-L-7)-Z5-L07-PT |  | 2027-03-08 → 2027-03-03 (-5d) |  | -152.02d → -149d |
| RHD4CZ5L07PT1501 | Backfilling and warning tape works for HDPE Pipline 160 mm - (RD-L-7)-Z5-L07-PT | 2027-03-27 → 2026-11-12 A (-135d) | 2027-04-03 → 2027-03-29 (-5d) | 0% → 1% | -152.02d → -149d |
| RHD4CZ5L07PT1401 | Primary Test for HDPE Pipline 160 mm - (RD-L-7)-Z5-L07-PT | 2027-03-23 → 2027-03-20 (-3d) | 2027-03-27 → 2027-03-22 (-5d) |  | -152.02d → -149d |
| 3449 | **RHD4-02-002-L07-(PT)-Gate Valves (Direct Buried)** | 2027-03-06 → 2027-03-02 (-4d) | 2027-04-05 → 2027-03-31 (-5d) |  |  |
| RHD4CZ5L07PT3100 | Installation for Direct Buried Gate Valves - (RD-L-7)-Z5-L07-PT | 2027-03-06 → 2027-03-02 (-4d) | 2027-03-08 → 2027-03-03 (-5d) |  | -131.02d → -128d |
| RHD4CZ5L07PT3200 | Stem and Service box for Direct Buried Gate Valves - (RD-L-7)-Z5-L07-PT | 2027-04-03 → 2027-03-30 (-4d) | 2027-04-05 → 2027-03-31 (-5d) |  | -150.02d → -147d |
| 3450 | **RHD4-02-002-L07-(PT)-Butterfly Valve Chamber** | 2027-02-17 → 2027-02-14 (-3d) | 2027-02-28 → 2027-02-23 (-5d) |  |  |
| RHD4CZ5L07PT2100 | Excavation and Bedding for Butterfly Valve Chamber for Potable Water Network - (RD-L-7)-Z5-L07-PT | 2027-02-17 → 2027-02-14 (-3d) | 2027-02-20 → 2027-02-15 (-5d) |  | -156.02d → -153d |
| RHD4CZ5L07PT2200 | PC works for Butterfly Valve Chamber for Potable Water Network - (RD-L-7)-Z5-L07-PT | 2027-02-20 → 2027-02-16 (-4d) | 2027-02-23 → 2027-02-17 (-6d) |  | -156.02d → -153d |
| RHD4CZ5L07PT2300 | Installation for Butterfly Valve Chamber for Potable Water Network - (RD-L-7)-Z5-L07-PT | 2027-02-23 → 2027-02-18 (-5d) | 2027-02-25 → 2027-02-20 (-5d) |  | -156.02d → -153d |
| RHD4CZ5L07PT2400 | Backfilling works for Butterfly Valve Chamber for Potable Water Network - (RD-L-7)-Z5-L07-PT | 2027-02-25 → 2027-02-21 (-4d) | 2027-02-28 → 2027-02-23 (-5d) |  | -156.02d → -153d |
| 3451 | **RHD4-02-002-L07-(PT)-Butterfly Valves** | 2027-02-25 → 2027-02-21 (-4d) | 2027-03-02 → 2027-02-25 (-5d) |  |  |
| RHD4CZ5L07PT3101 | Installation for Butterfly Valves for Potable Water Network - (RD-L-7)-Z5-L07-PT | 2027-02-25 → 2027-02-21 (-4d) | 2027-02-28 → 2027-02-23 (-5d) |  | -124.02d → -121d |
| RHD4CZ5L07PT3201 | Stem and Service box for Butterfly Valves for Potable Water Network - (RD-L-7)-Z5-L07-PT | 2027-02-28 → 2027-02-24 (-4d) | 2027-03-02 → 2027-02-25 (-5d) |  | -124.02d → -121d |
| 3452 | **RHD4-02-002-L07-(PT)-Wash out Valve Chambers** | 2027-04-03 → 2027-03-30 (-4d) | 2027-04-14 → 2027-04-10 (-4d) |  |  |
| RHD4CZ5L07PT2101 | Excavation and Bedding for Wash out Valve Chambers for Potable Water Network - (RD-L-7)-Z5-L07-PT | 2027-04-03 → 2027-03-30 (-4d) | 2027-04-05 → 2027-03-31 (-5d) |  | -152.02d → -149d |
| RHD4CZ5L07PT2201 | PC works for Wash out Valve Chambers for Potable Water Network - (RD-L-7)-Z5-L07-PT | 2027-04-05 → 2027-04-01 (-4d) | 2027-04-07 → 2027-04-03 (-4d) |  | -152.02d → -149d |
| RHD4CZ5L07PT2301 | Installation for Wash out Valve Chambers for Potable Water Network - (RD-L-7)-Z5-L07-PT | 2027-04-07 → 2027-04-04 (-3d) | 2027-04-10 → 2027-04-05 (-5d) |  | -152.02d → -149d |
| RHD4CZ5L07PT2401 | Backfilling works for Wash out Valve Chambers for Potable Water Network - (RD-L-7)-Z5-L07-PT | 2027-04-10 → 2027-04-06 (-4d) | 2027-04-14 → 2027-04-10 (-4d) |  | -152.02d → -149d |
| 3453 | **RHD4-02-002-L07-(PT)-Wash out Valves** | 2027-04-10 → 2027-04-06 (-4d) | 2027-04-19 → 2027-04-14 (-5d) |  |  |
| RHD4CZ5L07PT3102 | Installation for Wash out Valves for Potable Water Network - (RD-L-7)-Z5-L07-PT | 2027-04-10 → 2027-04-06 (-4d) | 2027-04-14 → 2027-04-10 (-4d) |  | -152.02d → -149d |
| RHD4CZ5L07PT3202 | Stem and Service box for Wash out Valves for Potable Water Network - (RD-L-7)-Z5-L07-PT | 2027-04-14 → 2027-04-11 (-3d) | 2027-04-19 → 2027-04-14 (-5d) |  | -152.02d → -149d |
| 3454 | **RHD4-02-002-L07-(PT)-Air Valve Chambers** | 2027-04-03 → 2027-03-30 (-4d) | 2027-04-17 → 2027-04-12 (-5d) |  |  |
| RHD4CZ5L07PT2102 | Excavation and Bedding for Air Valve Chambers for Potable Water Network - (RD-L-7)-Z5-L07-PT | 2027-04-03 → 2027-03-30 (-4d) | 2027-04-05 → 2027-03-31 (-5d) |  | -152.02d → -149d |
| RHD4CZ5L07PT2202 | PC works for Air Valve Chambers for Potable Water Network - (RD-L-7)-Z5-L07-PT | 2027-04-05 → 2027-04-01 (-4d) | 2027-04-07 → 2027-04-03 (-4d) |  | -152.02d → -149d |
| RHD4CZ5L07PT2302 | Installation for Air Valve Chambers for Potable Water Network - (RD-L-7)-Z5-L07-PT | 2027-04-07 → 2027-04-04 (-3d) | 2027-04-12 → 2027-04-07 (-5d) |  | -152.02d → -149d |
| RHD4CZ5L07PT2402 | Backfilling works for Air Valve Chambers for Potable Water Network - (RD-L-7)-Z5-L07-PT | 2027-04-12 → 2027-04-08 (-4d) | 2027-04-17 → 2027-04-12 (-5d) |  | -152.02d → -149d |
| 3455 | **RHD4-02-002-L07-(PT)-Air Valves** | 2027-03-08 → 2027-03-04 (-4d) | 2027-04-19 → 2027-04-14 (-5d) |  |  |
| RHD4CZ5L07PT3103 | Installation for Air Valves for Potable Water Network - (RD-L-7)-Z5-L07-PT | 2027-03-08 → 2027-03-04 (-4d) | 2027-03-14 → 2027-03-06 (-8d) |  | -123.02d → -120d |
| RHD4CZ5L07PT3203 | Stem and Service box for Air Valves for Potable Water Network - (RD-L-7)-Z5-L07-PT | 2027-04-17 → 2027-04-13 (-4d) | 2027-04-19 → 2027-04-14 (-5d) |  | -152.02d → -149d |
| 3456 | **RHD4-02-002-L07-(PT)-Fire Hydrant** | 2027-04-03 → 2027-03-30 (-4d) | 2027-05-02 → 2027-04-27 (-5d) |  |  |
| RHD4CZ5L07PT4100 | Excavation and Bedding and Pipe Installation for Fire Hydrant - (RD-L-7)-Z5-L07-PT | 2027-04-03 → 2027-03-30 (-4d) | 2027-04-11 → 2027-04-06 (-5d) |  | -151.02d → -148d |
| RHD4CZ5L07PT4200 | Valve Installation for Fire Hydrant - (RD-L-7)-Z5-L07-PT | 2027-04-11 → 2027-04-07 (-4d) | 2027-04-17 → 2027-04-12 (-5d) |  | -151.02d → -148d |
| RHD4CZ5L07PT4300 | Stem for Fire Hydrant - (RD-L-7)-Z5-L07-PT | 2027-04-17 → 2027-04-13 (-4d) | 2027-04-22 → 2027-04-18 (-4d) |  | -151.02d → -148d |
| RHD4CZ5L07PT4400 | Fire Installation for Fire Hydrant - (RD-L-7)-Z5-L07-PT | 2027-04-22 → 2027-04-19 (-3d) | 2027-04-28 → 2027-04-24 (-4d) |  | -151.02d → -148d |
| RHD4CZ5L07PT4500 | Protection Barriers for Fire Hydrant - (RD-L-7)-Z5-L07-PT | 2027-04-28 → 2027-04-25 (-3d) | 2027-05-02 → 2027-04-27 (-5d) |  | -151.02d → -148d |
| 3457 | **RHD4-02-002-L07-(PT)-Concrete Encasement** | 2027-02-28 → 2027-02-24 (-4d) | 2027-03-23 → 2027-03-18 (-5d) |  |  |
| RHD4CZ5L07PT5100 | Pipe Encasement for Potable Pipelines - (RD-L-7)-Z5-L07-PT | 2027-02-28 → 2027-02-24 (-4d) | 2027-03-23 → 2027-03-18 (-5d) |  | -152.02d → -149d |
| 3458 | **RHD4-02-002-Z5-L07-Irrigation Network - IRR** |  | 2027-04-10 → 2027-04-05 (-5d) |  |  |
| 3459 | **RHD4-02-002-L07-(IRR)-HDPE Pipes - 160 mm diameter** |  | 2027-03-29 → 2027-03-24 (-5d) |  |  |
| RHD4CZ5L07IRR1100 | Excavation works for HDPE Pipline 160 mm - (RD-L-7)-Z5-L07-IRR |  | 2027-03-07 → 2027-03-02 (-5d) |  | -156.02d → -153d |
| RHD4CZ5L07IRR1200 | Bedding works for HDPE Pipline 160 mm - (RD-L-7)-Z5-L07-IRR |  | 2027-03-15 → 2027-03-07 (-8d) |  | -145.02d → -142d |
| RHD4CZ5L07IRR1300 | Installing for HDPE Pipline 160 mm - (RD-L-7)-Z5-L07-IRR |  | 2027-03-22 → 2027-03-17 (-5d) |  | -145.02d → -142d |
| RHD4CZ5L07IRR1400 | Primary Test for HDPE Pipline 160 mm - (RD-L-7)-Z5-L07-IRR | 2027-03-22 → 2027-03-18 (-4d) | 2027-03-24 → 2027-03-20 (-4d) |  | -145.02d → -142d |
| RHD4CZ5L07IRR1500 | Backfilling and warning tape works for HDPE Pipline 160 mm - (RD-L-7)-Z5-L07-IRR | 2027-03-24 → 2027-03-21 (-3d) | 2027-03-29 → 2027-03-24 (-5d) |  | -145.02d → -142d |
| 1770 | **RHD4-02-002-L07-(IRR)-Air Valves** | 2027-03-17 → 2027-03-14 (-3d) | 2027-03-22 → 2027-03-17 (-5d) |  |  |
| RHD4CZ5L07IRR3103 | Installation for Air Valves for Irrigation Network - (RD-L-7)-Z5-L07-IRR | 2027-03-17 → 2027-03-14 (-3d) | 2027-03-20 → 2027-03-15 (-5d) |  | -156.02d → -153d |
| RHD4CZ5L07IRR3203 | Stem and Service box for Air Valves for Irrigation Network - (RD-L-7)-Z5-L07-IRR | 2027-03-20 → 2027-03-16 (-4d) | 2027-03-22 → 2027-03-17 (-5d) |  | -156.02d → -153d |
| 1769 | **RHD4-02-002-L07-(IRR)-Air Valve Chamber** | 2027-03-07 → 2027-03-03 (-4d) | 2027-03-20 → 2027-03-15 (-5d) |  |  |
| RHD4CZ5L07IRR2102 | Excavation and Bedding for Valve Chamber for Irrigation Network - (RD-L-7)-Z5-L07-IRR | 2027-03-07 → 2027-03-03 (-4d) | 2027-03-13 → 2027-03-04 (-9d) |  | -156.02d → -153d |
| RHD4CZ5L07IRR2202 | PC works for Valve Chamber for Irrigation Network - (RD-L-7)-Z5-L07-IRR | 2027-03-13 → 2027-03-06 (-7d) | 2027-03-15 → 2027-03-07 (-8d) |  | -156.02d → -153d |
| RHD4CZ5L07IRR2302 | Installation for Valve Chamber for Irrigation Network - (RD-L-7)-Z5-L07-IRR | 2027-03-15 → 2027-03-08 (-7d) | 2027-03-17 → 2027-03-13 (-4d) |  | -156.02d → -153d |
| RHD4CZ5L07IRR2402 | Backfilling works for Valve Chamber for Irrigation Network - (RD-L-7)-Z5-L07-IRR | 2027-03-17 → 2027-03-14 (-3d) | 2027-03-20 → 2027-03-15 (-5d) |  | -156.02d → -153d |
| 3467 | **RHD4-02-002-L07-(IRR)-Gate Valves (Direct Buried)** | 2027-03-18 → 2027-03-15 (-3d) | 2027-04-01 → 2027-03-28 (-4d) |  |  |
| RHD4CZ5L07IRR3100 | Installation for Direct Buried Gate Valves - (RD-L-7)-Z5-L07-IRR | 2027-03-18 → 2027-03-15 (-3d) | 2027-03-22 → 2027-03-17 (-5d) |  | -139.02d → -136d |
| RHD4CZ5L07IRR3200 | Stem and Service box for Direct Buried Gate Valves - (RD-L-7)-Z5-L07-IRR | 2027-03-29 → 2027-03-25 (-4d) | 2027-04-01 → 2027-03-28 (-4d) |  | -145.02d → -142d |
| 3470 | **RHD4-02-002-L07-(IRR)-Wash out Chamber** | 2027-03-29 → 2027-03-25 (-4d) | 2027-04-07 → 2027-04-03 (-4d) |  |  |
| RHD4CZ5L07IRR2101 | Excavation and Bedding for Wash out Chamber for Irrigation Network - (RD-L-7)-Z5-L07-IRR | 2027-03-29 → 2027-03-25 (-4d) | 2027-03-31 → 2027-03-27 (-4d) |  | -135.02d → -132d |
| RHD4CZ5L07IRR2201 | PC works for Wash out Chamber for Irrigation Network - (RD-L-7)-Z5-L07-IRR | 2027-03-31 → 2027-03-28 (-3d) | 2027-04-03 → 2027-03-29 (-5d) |  | -135.02d → -132d |
| RHD4CZ5L07IRR2301 | Installation for Wash out Chamber for Irrigation Network - (RD-L-7)-Z5-L07-IRR | 2027-04-03 → 2027-03-30 (-4d) | 2027-04-05 → 2027-03-31 (-5d) |  | -135.02d → -132d |

| ID | Task | Start | Finish | Total float |
| --- | --- | --- | --- | --- |
| RHD4CZ5L07IRR2401 | Backfilling works for Wash out Chamber for Irrigation Network - (RD-L-7)-Z5-L07-IRR | 2027-04-05 → 2027-04-01 (-4d) | 2027-04-07 → 2027-04-03 (-4d) | -135.02d → -132d |
| 3471 | **RHD4-02-002-L07-(IRR)-Wash out Valves** | 2027-04-05 → 2027-04-01 (-4d) | 2027-04-10 → 2027-04-05 (-5d) |  |
| RHD4CZ5L07IRR3102 | Installation for Wash out Valve for Irrigation Network - (RD-L-7)-Z5-L07-IRR | 2027-04-05 → 2027-04-01 (-4d) | 2027-04-07 → 2027-04-03 (-4d) | -135.02d → -132d |
| RHD4CZ5L07IRR3202 | Stem and Service box for Wash out Valve for Irrigation Network - (RD-L-7)-Z5-L07-IRR | 2027-04-07 → 2027-04-04 (-3d) | 2027-04-10 → 2027-04-05 (-5d) | -135.02d → -132d |
| 3492 | **RHD4-02-002-Z5-L07-Medium Voltage Network - MV** | 2027-07-24 → 2027-07-22 (-2d) | 2027-09-19 → 2027-09-16 (-3d) |  |
| 3493 | **RHD4-02-002-L07-(MV)-Medium Voltage cable trench** | 2027-07-24 → 2027-07-22 (-2d) | 2027-08-19 → 2027-08-17 (-2d) |  |
| RHD4CZ5L07MV1100 | Excavation for Medium Voltage Trench - (RD-L-7)-Z5-L07-MV | 2027-07-24 → 2027-07-22 (-2d) | 2027-08-05 → 2027-08-03 (-2d) | -153.02d → -152d |
| RHD4CZ5L07MV1200 | Trench Backfilling for Medium Voltage Network - (RD-L-7)-Z5-L07-MV | 2027-08-05 → 2027-08-04 (-1d) | 2027-08-19 → 2027-08-17 (-2d) | -113.02d → -112d |
| 1982 | **RHD4-02-002-L07-(MV)-Medium Voltage cables 3Cx 50 mm²** | 2027-08-29 → 2027-08-28 (-1d) | 2027-08-31 → 2027-08-29 (-2d) |  |
| RHD4CZ5L07MV3401 | Termination of Medium Voltage Cables 3Cx 50 mm² - (RD-L-7)-Z5-L07-MV | 2027-08-29 → 2027-08-28 (-1d) | 2027-08-31 → 2027-08-29 (-2d) | -111.02d → -110d |
| 3494 | **RHD4-02-002-L07-(MV)-Medium Voltage duct banks** | 2027-08-05 → 2027-08-04 (-1d) | 2027-09-19 → 2027-09-16 (-3d) |  |
| RHD4CZ5L07MV2100 | Excavation of Duct Banks for Medium Voltage Network - (RD-L-7)-Z5-L07-MV | 2027-08-05 → 2027-08-04 (-1d) | 2027-08-16 → 2027-08-14 (-2d) | -115.02d → -114d |
| RHD4CZ5L07MV2200 | Installation of Duct Banks for Medium Voltage Network - (RD-L-7)-Z5-L07-MV | 2027-08-16 → 2027-08-15 (-1d) | 2027-08-31 → 2027-08-29 (-2d) | -115.02d → -114d |
| RHD4CZ5L07MV2300 | Pouring of Duct Banks for Medium Voltage Network - (RD-L-7)-Z5-L07-MV | 2027-08-31 → 2027-08-30 (-1d) | 2027-09-11 → 2027-09-08 (-3d) | -115.02d → -114d |
| RHD4CZ5L07MV2400 | Backfilling of Duct Banks for Medium Voltage Network - (RD-L-7)-Z5-L07-MV | 2027-09-11 → 2027-09-09 (-2d) | 2027-09-19 → 2027-09-16 (-3d) | -115.02d → -114d |
| 3495 | **RHD4-02-002-L07-(MV)-Medium Voltage cables 3Cx 500 mm²** | 2027-08-05 → 2027-08-04 (-1d) | 2027-08-29 → 2027-08-26 (-3d) |  |
| RHD4CZ5L07MV3100 | Installation of Medium Voltage Cables 3Cx 500 mm² - (RD-L-7)-Z5-L07-MV | 2027-08-05 → 2027-08-04 (-1d) | 2027-08-16 → 2027-08-14 (-2d) | -113.02d → -112d |
| RHD4CZ5L07MV3200 | Joints Installation of Medium Voltage Cables 3Cx 500 mm² - (RD-L-7)-Z5-L07-MV | 2027-08-16 → 2027-08-15 (-1d) | 2027-08-19 → 2027-08-17 (-2d) | -113.02d → -112d |
| RHD4CZ5L07MV3300 | Testing of Medium Voltage Cables 3Cx 500 mm² - (RD-L-7)-Z5-L07-MV | 2027-08-19 → 2027-08-18 (-1d) | 2027-08-29 → 2027-08-26 (-3d) | -113.02d → -112d |
| 3499 | **RHD4-02-002-Z5-L07-Low Voltage Network - LV** | 2027-02-28 → 2027-02-24 (-4d) | 2027-09-19 → 2027-09-16 (-3d) |  |
| 3500 | **RHD4-02-002-L07-(LV)-Low Voltage duct banks** | 2027-02-28 → 2027-02-24 (-4d) | 2027-03-13 → 2027-03-04 (-9d) |  |
| RHD4CZ5L07LV2100 | Excavation of Duct Banks for Low Voltage Network - (RD-L-7)-Z5-L07-LV | 2027-02-28 → 2027-02-24 (-4d) | 2027-03-02 → 2027-02-25 (-5d) | -156.02d → -153d |
| RHD4CZ5L07LV2200 | Installation of Duct Banks for Low Voltage Network - (RD-L-7)-Z5-L07-LV | 2027-03-02 → 2027-02-27 (-3d) | 2027-03-04 → 2027-02-28 (-4d) | -154.02d → -151d |
| RHD4CZ5L07LV2300 | Pouring of Duct Banks for Low Voltage Network - (RD-L-7)-Z5-L07-LV | 2027-03-04 → 2027-03-01 (-3d) | 2027-03-07 → 2027-03-02 (-5d) | -150.02d → -147d |
| RHD4CZ5L07LV2400 | Backfilling of Duct Banks for Low Voltage Network - (RD-L-7)-Z5-L07-LV | 2027-03-07 → 2027-03-03 (-4d) | 2027-03-13 → 2027-03-04 (-9d) | -148.02d → -145d |
| 3502 | **RHD4-02-002-L07-(LV)-Low Voltage cables** | 2027-08-05 → 2027-08-04 (-1d) | 2027-09-07 → 2027-09-05 (-2d) |  |
| RHD4CZ5L07LV3100 | Excavation for Low Voltage Cables for Low Voltage Network - (RD-L-7)-Z5-L07-LV | 2027-08-05 → 2027-08-04 (-1d) | 2027-08-16 → 2027-08-14 (-2d) | -153.02d → -152d |
| RHD4CZ5L07LV3200 | Cable Laying of Low Voltage Cables for Low Voltage Network - (RD-L-7)-Z5-L07-LV | 2027-08-16 → 2027-08-15 (-1d) | 2027-08-24 → 2027-08-22 (-2d) | -148.02d → -147d |
| RHD4CZ5L07LV3300 | Warning tape and Backfill for Low Voltage Cables for Low Voltage Network - (RD-L-7)-Z5-L07-LV | 2027-08-24 → 2027-08-23 (-1d) | 2027-09-01 → 2027-08-30 (-2d) | -148.02d → -147d |
| RHD4CZ5L07LV3400 | Testing of Low Voltage Cables for Low Voltage Network - (RD-L-7)-Z5-L07-LV | 2027-09-01 → 2027-08-31 (-1d) | 2027-09-07 → 2027-09-05 (-2d) | -148.02d → -147d |
| 3503 | **RHD4-02-002-L07-(LV)-Low Voltage Distribution Pillars** | 2027-09-07 → 2027-09-06 (-1d) | 2027-09-14 → 2027-09-12 (-2d) |  |
| RHD4CZ5L07LV4100 | Leveling for Distribution Pillars for Low Voltage Network - (RD-L-7)-Z5-L07-LV | 2027-09-07 → 2027-09-06 (-1d) | 2027-09-09 → 2027-09-07 (-2d) | -148.02d → -147d |
| RHD4CZ5L07LV4200 | Lean Concrete for Distribution Pillars for Low Voltage Network - (RD-L-7)-Z5-L07-LV | 2027-09-09 → 2027-09-08 (-1d) | 2027-09-12 → 2027-09-09 (-3d) | -148.02d → -147d |
| RHD4CZ5L07LV4300 | Installation of Distribution Pillars for Low Voltage Network - (RD-L-7)-Z5-L07-LV | 2027-09-12 → 2027-09-11 (-1d) | 2027-09-14 → 2027-09-12 (-2d) | -148.02d → -147d |
| 4257 | **RHD4-02-002-L07-(LV)-Low Voltage Drawpit** | 2027-09-14 → 2027-09-13 (-1d) | 2027-09-19 → 2027-09-16 (-3d) |  |
| RHD4CZ5L07LV5100 | Excavation of Drawpit size 900x900x1000mm for Low Voltage Network - (RD-L-7)-Z5-L07-LV | 2027-09-14 → 2027-09-13 (-1d) | 2027-09-16 → 2027-09-14 (-2d) | -131.02d → -130d |
| RHD4CZ5L07LV5200 | Installation of Drawpit size 900x900x1000mm for Low Voltage Network - (RD-L-7)-Z5-L07-LV | 2027-09-16 → 2027-09-15 (-1d) | 2027-09-19 → 2027-09-16 (-3d) | -131.02d → -130d |
| 3505 | **RHD4-02-002-Z5-L07-Street Lighting Network - SL** | 2027-03-02 → 2027-02-27 (-3d) | 2027-12-26 → 2027-12-23 (-3d) |  |
| 3506 | **RHD4-02-002-L07-(SL)-Street Lighting duct banks** | 2027-03-02 → 2027-02-27 (-3d) | 2027-03-25 → 2027-03-21 (-4d) |  |
| RHD4CZ5L07SL2100 | Excavation of Duct Banks for Street Lighting Network - (RD-L-7)-Z5-L07-SL | 2027-03-02 → 2027-02-27 (-3d) | 2027-03-07 → 2027-03-02 (-5d) | -156.02d → -153d |
| RHD4CZ5L07SL2200 | Installation of Duct Banks for Street Lighting Network - (RD-L-7)-Z5-L07-SL | 2027-03-07 → 2027-03-03 (-4d) | 2027-03-17 → 2027-03-13 (-4d) | -156.02d → -153d |
| RHD4CZ5L07SL2300 | Pouring of Duct Banks for Street Lighting Network - (RD-L-7)-Z5-L07-SL | 2027-03-17 → 2027-03-14 (-3d) | 2027-03-22 → 2027-03-17 (-5d) | -156.02d → -153d |
| RHD4CZ5L07SL2400 | Backfilling of Duct Banks for Street Lighting Network - (RD-L-7)-Z5-L07-SL | 2027-03-22 → 2027-03-18 (-4d) | 2027-03-25 → 2027-03-21 (-4d) | -156.02d → -153d |
| 3507 | **RHD4-02-002-L07-(SL)-Street Lighting Drawpit** | 2027-09-19 → 2027-09-18 (-1d) | 2027-09-25 → 2027-09-21 (-4d) |  |
| RHD4CZ5L07SL5100 | Excavation of Drawpit size 600x600x900mm for Street Lighting Network - (RD-L-7)-Z5-L07-SL | 2027-09-19 → 2027-09-18 (-1d) | 2027-09-21 → 2027-09-19 (-2d) | -131.02d → -130d |
| RHD4CZ5L07SL5200 | Installation of Drawpit size 600x600x900mm for Street Lighting Network - (RD-L-7)-Z5-L07-SL | 2027-09-21 → 2027-09-20 (-1d) | 2027-09-25 → 2027-09-21 (-4d) | -131.02d → -130d |
| 3508 | **RHD4-02-002-L07-(SL)-Street Lighting cables** | 2027-09-25 → 2027-09-22 (-3d) | 2027-11-08 → 2027-11-06 (-2d) |  |
| RHD4CZ5L07SL3100 | Excavation for Street Lighting Cables for Street Lighting Network - (RD-L-7)-Z5-L07-SL | 2027-09-25 → 2027-09-22 (-3d) | 2027-10-09 → 2027-10-06 (-3d) | -131.02d → -130d |
| RHD4CZ5L07SL3200 | Cable Laying of Street Lighting Cables for Street Lighting Network - (RD-L-7)-Z5-L07-SL | 2027-10-09 → 2027-10-07 (-2d) | 2027-10-20 → 2027-10-18 (-2d) | -131.02d → -130d |
| RHD4CZ5L07SL3300 | Warning tape and Backfill for Street Lighting Cables for Street Lighting Network - (RD-L-7)-Z5-L07-SL | 2027-10-20 → 2027-10-19 (-1d) | 2027-11-01 → 2027-10-30 (-2d) | -131.02d → -130d |
| RHD4CZ5L07SL3400 | Testing of Street Lighting Cables for Street Lighting Network - (RD-L-7)-Z5-L07-SL | 2027-11-01 → 2027-10-31 (-1d) | 2027-11-08 → 2027-11-06 (-2d) | -131.02d → -130d |
| 3509 | **RHD4-02-002-L07-(SL)-Street Lighting Poles** | 2027-11-08 → 2027-11-07 (-1d) | 2027-12-19 → 2027-12-16 (-3d) |  |
| RHD4CZ5L07SL1100 | Excavation for RC Base for Lighting Poles for Street Lighting Network - (RD-L-7)-Z5-L07-SL | 2027-11-08 → 2027-11-07 (-1d) | 2027-11-15 → 2027-11-13 (-2d) | -131.02d → -130d |
| RHD4CZ5L07SL1200 | Installation for RC Base for Lighting Poles for Street Lighting Network - (RD-L-7)-Z5-L07-SL | 2027-11-15 → 2027-11-14 (-1d) | 2027-11-22 → 2027-11-20 (-2d) | -131.02d → -130d |
| RHD4CZ5L07SL1300 | Backfill for RC Base for Lighting Poles for Street Lighting Network - (RD-L-7)-Z5-L07-SL | 2027-11-22 → 2027-11-21 (-1d) | 2027-11-29 → 2027-11-27 (-2d) | -131.02d → -130d |
| RHD4CZ5L07SL1400 | Installation for Lighting Poles for Street Lighting Network - (RD-L-7)-Z5-L07-SL | 2027-11-29 → 2027-11-28 (-1d) | 2027-12-09 → 2027-12-07 (-2d) | -131.02d → -130d |
| RHD4CZ5L07SL1500 | Luminaire Installation for Lighting Poles for Street Lighting Network - (RD-L-7)-Z5-L07-SL | 2027-12-12 → 2027-12-11 (-1d) | 2027-12-19 → 2027-12-16 (-3d) | -131.02d → -130d |
| 3511 | **RHD4-02-002-L07-(SL)-Street Lighting Earthing System** | 2027-12-09 → 2027-12-08 (-1d) | 2027-12-12 → 2027-12-09 (-3d) |  |
| RHD4CZ5L07SL6100 | Installation of Earthing for Lighting Poles and Fedder Pillers for Street Lighting Network - (RD-L-7)-Z5-L07-SL | 2027-12-09 → 2027-12-08 (-1d) | 2027-12-12 → 2027-12-09 (-3d) | -131.02d → -130d |
| 5023 | **RHD4-02-002-L07-(SL)-Street Lighting Feeder Pillars** | 2027-12-19 → 2027-12-18 (-1d) | 2027-12-26 → 2027-12-23 (-3d) |  |
| RHD4CZ5L07SL4100 | Leveling for Distribution Pillars for Street Lighting Network - (RD-L-7)-Z5-L07-SL | 2027-12-19 → 2027-12-18 (-1d) | 2027-12-21 → 2027-12-19 (-2d) | -131.02d → -130d |
| RHD4CZ5L07SL4200 | Lean Concrete for Distribution Pillars for Street Lighting Network - (RD-L-7)-Z5-L07-SL | 2027-12-21 → 2027-12-20 (-1d) | 2027-12-23 → 2027-12-21 (-2d) | -131.02d → -130d |
| RHD4CZ5L07SL4300 | Installation of Distribution Pillars for Street Lighting Network - (RD-L-7)-Z5-L07-SL | 2027-12-23 → 2027-12-22 (-1d) | 2027-12-26 → 2027-12-23 (-3d) | -131.02d → -130d |
| 3517 | **RHD4-02-002-Z5-L07-Telecommunications Network - TC** | 2027-12-26 → 2027-12-25 (-1d) | 2028-03-15 → 2028-03-07 (-8d) |  |
| 3518 | **RHD4-02-002-L07-(TC)-Telecommunications Ducts** | 2027-12-26 → 2027-12-25 (-1d) | 2028-03-15 → 2028-03-07 (-8d) |  |
| RHD4CZ5L07TC2100 | Excavation of HDPE Ducts for Telecom Network - (RD-L-7)-Z5-L07-TC | 2027-12-26 → 2027-12-25 (-1d) | 2028-01-05 → 2028-01-03 (-2d) | -131.02d → -130d |
| RHD4CZ5L07TC2200 | Installation of HDPE Ducts for Telecom Network - (RD-L-7)-Z5-L07-TC | 2028-01-05 → 2028-01-04 (-1d) | 2028-01-20 → 2028-01-18 (-2d) | -131.02d → -130d |
| RHD4CZ5L07TC2400 | Backfilling of HDPE Ducts for Telecom Network - (RD-L-7)-Z5-L07-TC | 2028-03-06 → 2028-02-23 (-12d) | 2028-03-15 → 2028-03-07 (-8d) | -166d → -159d |
| 3519 | **RHD4-02-002-L07-(TC)-Telecommunications Manholes** | 2028-02-03 → 2028-02-01 (-2d) | 2028-03-05 → 2028-02-21 (-13d) |  |
| RHD4CZ5L07TC5100 | Excavation for Manholes for Telecom Network - (RD-L-7)-Z5-L07-TC | 2028-02-03 → 2028-02-01 (-2d) | 2028-02-10 → 2028-02-07 (-3d) | -156.02d → -154d |

| ID | Task | Start | Finish | Complete | Total float |
| --- | --- | --- | --- | --- | --- |
| RHD4CZ5L07TC5200 | Installation of Manholes for Telecom Network - (RD-L-7)-Z5-L07-TC | 2028-02-23 → 2028-02-14 (-9d) | 2028-03-05 → 2028-02-21 (-13d) |  | -166d → -159d |
| 3521 | **RHD4-02-002-Z5-L07-Information and Communication Technologies - ICT** | 2027-01-02 → 2027-01-09 (+7d) | 2028-05-03 → 2028-04-25 (-8d) |  |  |
| 3522 | **RHD4-02-002-L07-(ICT)-Information and Communication Technologies Ducts** | 2028-03-16 → 2028-03-08 (-8d) | 2028-05-03 → 2028-04-25 (-8d) |  |  |
| RHD4CZ5L07ICT2100 | Excavation of HDPE Ducts for ICT Network - (RD-L-7)-Z5-L07-ICT | 2028-03-16 → 2028-03-08 (-8d) | 2028-03-29 → 2028-03-21 (-8d) |  | -147d → -140d |
| RHD4CZ5L07ICT2200 | Installation of HDPE Ducts for ICT Network - (RD-L-7)-Z5-L07-ICT | 2028-03-30 → 2028-03-22 (-8d) | 2028-04-19 → 2028-04-11 (-8d) |  | -147d → -140d |
| RHD4CZ5L07ICT2400 | Backfilling of HDPE Ducts for ICT Network - (RD-L-7)-Z5-L07-ICT | 2028-04-20 → 2028-04-12 (-8d) | 2028-05-03 → 2028-04-25 (-8d) |  | -147d → -140d |
| 3523 | **RHD4-02-002-L07-(ICT)-Information and Communication Technologies Manholes** | 2028-03-30 → 2028-03-22 (-8d) | 2028-04-12 → 2028-04-04 (-8d) |  |  |
| RHD4CZ5L07ICT5100 | Excavation for Manholes for ICT Network - (RD-L-7)-Z5-L07-ICT | 2028-03-30 → 2028-03-22 (-8d) | 2028-04-05 → 2028-03-28 (-8d) |  | -141d → -134d |
| RHD4CZ5L07ICT5200 | Installation of Manholes for ICT Network - (RD-L-7)-Z5-L07-ICT | 2028-04-06 → 2028-03-29 (-8d) | 2028-04-12 → 2028-04-04 (-8d) |  | -141d → -134d |
| 3524 | **RHD4-02-002-L07-(ICT)-Information and Communication Technologies Road Crossings** | 2027-01-02 → 2027-01-09 (+7d) | 2027-02-27 → 2027-02-15 (-12d) |  |  |
| RHD4CZ5L07ICT3100 | Excavation for Road Crossings for ICT Network - (RD-L-7)-Z5-L07-ICT | 2027-01-02 → 2027-01-09 (+7d) | 2027-01-04 → 2027-01-11 (+7d) |  | -147d → -148d |
| RHD4CZ5L07ICT3200 | Installation of Road Crossings for ICT Network - (RD-L-7)-Z5-L07-ICT | 2027-02-14 → 2027-02-03 (-11d) | 2027-02-17 → 2027-02-07 (-10d) |  | -181d → -167d |
| RHD4CZ5L07ICT3300 | Pouring of Road Crossings for ICT Network - (RD-L-7)-Z5-L07-ICT | 2027-02-18 → 2027-02-08 (-10d) | 2027-02-23 → 2027-02-11 (-12d) |  | -181d → -167d |
| RHD4CZ5L07ICT3400 | Backfilling of Road Crossings for ICT Network - (RD-L-7)-Z5-L07-ICT | 2027-02-24 → 2027-02-13 (-11d) | 2027-02-27 → 2027-02-15 (-12d) |  | -181d → -167d |
| 3525 | **RHD4-02-002-Z5-L07-Security Network - CCTV** | 2028-05-08 → 2028-04-26 (-12d) | 2028-06-08 → 2028-05-31 (-8d) |  |  |
| 3526 | **RHD4-02-002-L07-(CCTV)-Civil Works** | 2028-05-08 → 2028-04-26 (-12d) | 2028-05-18 → 2028-05-10 (-8d) |  |  |
| RHD4CZ5L07CCTV2100 | Civil Works for Security Network - (RD-L-7)-Z5-L07-CCTV | 2028-05-08 → 2028-04-26 (-12d) | 2028-05-18 → 2028-05-10 (-8d) |  | -147d → -140d |
| 3527 | **RHD4-02-002-L07-(CCTV)-CCTV Poles** | 2028-05-20 → 2028-05-11 (-9d) | 2028-05-30 → 2028-05-22 (-8d) |  |  |
| RHD4CZ5L07CCTV1100 | Excavation for RC Base for CCTV Poles for Security Network - (RD-L-7)-Z5-L07-CCTV | 2028-05-20 → 2028-05-11 (-9d) | 2028-05-21 → 2028-05-13 (-8d) |  | -147d → -140d |
| RHD4CZ5L07CCTV1200 | Installation for RC Base for CCTV Poles for Security Network - (RD-L-7)-Z5-L07-CCTV | 2028-05-22 → 2028-05-14 (-8d) | 2028-05-23 → 2028-05-15 (-8d) |  | -147d → -140d |
| RHD4CZ5L07CCTV1300 | Backfill for RC Base for CCTV Poles for Security Network - (RD-L-7)-Z5-L07-CCTV | 2028-05-24 → 2028-05-16 (-8d) | 2028-05-25 → 2028-05-17 (-8d) |  | -147d → -140d |
| RHD4CZ5L07CCTV1400 | Installation for CCTV Poles for Security Network - (RD-L-7)-Z5-L07-CCTV | 2028-05-27 → 2028-05-18 (-9d) | 2028-05-28 → 2028-05-20 (-8d) |  | -147d → -140d |
| RHD4CZ5L07CCTV1500 | Protection post Installation for CCTV Poles for Security Network - (RD-L-7)-Z5-L07-CCTV | 2028-05-29 → 2028-05-21 (-8d) | 2028-05-30 → 2028-05-22 (-8d) |  | -139d → -132d |
| 3528 | **RHD4-02-002-L07-(CCTV)-Camera** | 2028-05-31 → 2028-05-23 (-8d) | 2028-06-01 → 2028-05-24 (-8d) |  |  |
| RHD4CZ5L07CCTV3100 | Installation for Cameras for Security Network - (RD-L-7)-Z5-L07-CCTV | 2028-05-31 → 2028-05-23 (-8d) | 2028-06-01 → 2028-05-24 (-8d) |  | -147d → -140d |
| 3529 | **RHD4-02-002-L07-(CCTV)-Power and Infrastructure** | 2028-05-29 → 2028-05-21 (-8d) | 2028-06-01 → 2028-05-24 (-8d) |  |  |
| RHD4CZ5L07CCTV4100 | Installation of Power outlet, UPS and midspan for PTZ Camerafor Cameras for Security Network - (RD-L-7)-Z5-L07-CCTV | 2028-05-29 → 2028-05-21 (-8d) | 2028-05-30 → 2028-05-22 (-8d) |  | -147d → -140d |
| RHD4CZ5L07CCTV4200 | Short Range Wireless PoP wireless Bridgefor CCTV Poles for Security Network - (RD-L-7)-Z5-L07-CCTV | 2028-05-31 → 2028-05-23 (-8d) | 2028-06-01 → 2028-05-24 (-8d) |  | -147d → -140d |
| 3531 | **RHD4-02-002-L07-(CCTV)-CCTV Panels and Components** | 2028-06-03 → 2028-05-25 (-9d) | 2028-06-08 → 2028-05-31 (-8d) |  |  |
| RHD4CZ5L07CCTV6100 | Installation for CCTV Panels for Security Network - (RD-L-7)-Z5-L07-CCTV | 2028-06-03 → 2028-05-25 (-9d) | 2028-06-08 → 2028-05-31 (-8d) |  | -147d → -140d |
| 2217 | **RHD4-02-002-Z4** |  | 2028-03-09 → 2028-03-06 (-3d) |  |  |
| 8270 | **RHD4-02-002-Z4-L01** | 2027-01-10 → 2026-11-07 (-64d) | 2027-10-17 → 2027-10-13 (-4d) |  |  |
| 8449 | **RHD4-02-002-Z4-L01-Road Works - RD** | 2027-01-21 → 2027-01-28 (+7d) | 2027-10-02 → 2027-09-27 (-5d) |  |  |
| 8450 | **RHD4-02-002-L01-(RD)-Subgrade** | 2027-01-21 → 2027-01-28 (+7d) | 2027-01-23 → 2027-01-30 (+7d) |  |  |
| RHD4CZ4L01RD1100 | Supply, lay and compaction subgrade compacted thickness 300 mm for Roads - (RD-L-1)-Z4-L01-RD | 2027-01-21 → 2027-01-28 (+7d) | 2027-01-23 → 2027-01-30 (+7d) |  | -136d → -142d |
| 8451 | **RHD4-02-002-L01-(RD)-Aggregate Base Course** | 2027-01-24 → 2027-01-31 (+7d) | 2027-01-25 → 2027-02-01 (+7d) |  |  |
| RHD4CZ4L01RD2100 | Supply, lay and compaction Aggregate base course compacted thickness 300 mmfor Roads - (RD-L-1)-Z4-L01-RD | 2027-01-24 → 2027-01-31 (+7d) | 2027-01-25 → 2027-02-01 (+7d) |  | -136d → -142d |
| 8452 | **RHD4-02-002-L01-(RD)-Bituminous base course Two Layers, including (MC1)&(RC2)** | 2027-04-03 → 2027-04-01 (-2d) | 2027-09-18 → 2027-09-13 (-5d) |  |  |
| RHD4CZ4L01RD3100 | Supply, lay and Asphaltic base course including Prime Coat (MC1) for 1st Layer - (RD-L-1)-Z4-L01-RD | 2027-04-03 → 2027-04-01 (-2d) | 2027-04-05 → 2027-04-03 (-2d) |  | -189.02d → -188d |
| RHD4CZ4L01RD3200 | Supply, lay and Asphaltic base course including Tack Coat (RC2) for 2nd Layer - (RD-L-1)-Z4-L01-RD | 2027-09-15 → 2027-09-12 (-3d) | 2027-09-18 → 2027-09-13 (-5d) |  | -163.02d → -160d |
| 8454 | **RHD4-02-002-L01-(RD)-Precast Concrete Curb** | 2027-09-18 → 2027-09-14 (-4d) | 2027-09-25 → 2027-09-19 (-6d) |  |  |
| RHD4CZ4L01RD5100 | Supply and installation Precast Concrete Kerb for Roads - (RD-L-1)-Z4-L01-RD | 2027-09-18 → 2027-09-14 (-4d) | 2027-09-25 → 2027-09-19 (-6d) |  | -163.02d → -160d |
| 8457 | **RHD4-02-002-L01-(RD)-Traffic Signage** | 2027-09-25 → 2027-09-20 (-5d) | 2027-10-02 → 2027-09-27 (-5d) |  |  |
| RHD4CZ4L01RD8100 | Installation of Traffic Signage for Road Network - (RD-L-1)-Z4-L01-RD | 2027-09-25 → 2027-09-20 (-5d) | 2027-10-02 → 2027-09-27 (-5d) |  | -158.02d → -155d |
| 8453 | **RHD4-02-002-L01-(RD)-Bituminous concrete wearing course including tack coat (RC2)** | 2027-09-25 → 2027-09-20 (-5d) | 2027-09-27 → 2027-09-21 (-6d) |  |  |
| RHD4CZ4L01RD4100 | Supply, lay and compaction Asphaltic wearing course including tack Coat (RC2)for Road Network - (RD-L-1)-Z4-L01-RD | 2027-09-25 → 2027-09-20 (-5d) | 2027-09-27 → 2027-09-21 (-6d) |  | -163.02d → -160d |
| 8456 | **RHD4-02-002-L01-(RD)-Pavement Marking** | 2027-09-27 → 2027-09-22 (-5d) | 2027-10-02 → 2027-09-27 (-5d) |  |  |
| RHD4CZ4L01RD7100 | Pavement Markings for Road Network - (RD-L-1)-Z4-L01-RD | 2027-09-27 → 2027-09-22 (-5d) | 2027-10-02 → 2027-09-27 (-5d) |  | -163.02d → -160d |
| 8360 | **RHD4-02-002-Z4-L01-Potable Network - PT** | 2027-06-14 → 2026-11-07 (-219d) | 2027-07-10 → 2027-07-05 (-5d) |  |  |
| 8362 | **RHD4-02-002-L01-(PT)-HDPE Pipes - 160 mm diameter** | 2027-06-14 → 2026-11-07 (-219d) | 2027-06-28 → 2027-06-23 (-5d) |  |  |
| RHD4CZ4L01PT1201 | Bedding works for HDPE Pipline 160 mm - (RD-L-1)-Z4-L01-PT | 2027-06-16 → 2026-11-07 A (-221d) | 2027-06-19 → 2027-06-14 (-5d) | 0% → 5% | -153.02d → -150d |
| RHD4CZ4L01PT1301 | Installing for HDPE Pipline 160 mm - (RD-L-1)-Z4-L01-PT | 2027-06-19 → 2026-11-08 A (-223d) | 2027-06-21 → 2027-06-16 (-5d) | 0% → 6% | -153.02d → -150d |
| RHD4CZ4L01PT1501 | Backfilling and warning tape works for HDPE Pipline 160 mm - (RD-L-1)-Z4-L01-PT | 2027-06-26 → 2026-11-09 A (-229d) | 2027-06-28 → 2027-06-23 (-5d) |  | -153.02d → -150d |
| RHD4CZ4L01PT1101 | Excavation works for HDPE Pipline 160 mm - (RD-L-1)-Z4-L01-PT | 2027-06-14 → 2026-11-12 A (-214d) | 2027-06-16 → 2027-06-12 (-4d) | 0% → 3% | -153.02d → -150d |
| RHD4CZ4L01PT1401 | Primary Test for HDPE Pipline 160 mm - (RD-L-1)-Z4-L01-PT | 2027-06-23 → 2027-06-20 (-3d) | 2027-06-26 → 2027-06-21 (-5d) |  | -153.02d → -150d |
| 8366 | **RHD4-02-002-L01-(PT)-Gate Valves (Direct Buried)** | 2027-06-21 → 2027-06-17 (-4d) | 2027-06-30 → 2027-06-26 (-4d) |  |  |
| RHD4CZ4L01PT3100 | Installation for Direct Buried Gate Valves - (RD-L-1)-Z4-L01-PT | 2027-06-21 → 2027-06-17 (-4d) | 2027-06-23 → 2027-06-19 (-4d) |  | -153.02d → -150d |
| RHD4CZ4L01PT3200 | Stem and Service box for Direct Buried Gate Valves - (RD-L-1)-Z4-L01-PT | 2027-06-28 → 2027-06-24 (-4d) | 2027-06-30 → 2027-06-26 (-4d) |  | -149.02d → -146d |
| 8373 | **RHD4-02-002-L01-(PT)-Fire Hydrant** | 2027-06-28 → 2027-06-24 (-4d) | 2027-07-10 → 2027-07-05 (-5d) |  |  |
| RHD4CZ4L01PT4100 | Excavation and Bedding and Pipe Installation for Fire Hydrant - (RD-L-1)-Z4-L01-PT | 2027-06-28 → 2027-06-24 (-4d) | 2027-06-30 → 2027-06-26 (-4d) |  | -153.02d → -150d |
| RHD4CZ4L01PT4200 | Valve Installation for Fire Hydrant - (RD-L-1)-Z4-L01-PT | 2027-06-30 → 2027-06-27 (-3d) | 2027-07-03 → 2027-06-28 (-5d) |  | -153.02d → -150d |
| RHD4CZ4L01PT4300 | Stem for Fire Hydrant - (RD-L-1)-Z4-L01-PT | 2027-07-03 → 2027-06-29 (-4d) | 2027-07-05 → 2027-06-30 (-5d) |  | -153.02d → -150d |
| RHD4CZ4L01PT4400 | Fire Installation for Fire Hydrant - (RD-L-1)-Z4-L01-PT | 2027-07-05 → 2027-07-01 (-4d) | 2027-07-07 → 2027-07-03 (-4d) |  | -153.02d → -150d |
| RHD4CZ4L01PT4500 | Protection Barriers for Fire Hydrant - (RD-L-1)-Z4-L01-PT | 2027-07-07 → 2027-07-04 (-3d) | 2027-07-10 → 2027-07-05 (-5d) |  | -153.02d → -150d |
| 8409 | **RHD4-02-002-Z4-L01-Medium Voltage Network - MV** | 2027-01-10 → 2027-01-17 (+7d) | 2027-04-22 → 2027-04-20 (-2d) |  |  |
| 8410 | **RHD4-02-002-L01-(MV)-Medium Voltage cable trench** | 2027-04-05 → 2027-04-04 (-1d) | 2027-04-20 → 2027-04-18 (-2d) |  |  |
| RHD4CZ4L01MV1100 | Excavation for Medium Voltage Trench - (RD-L-1)-Z4-L01-MV | 2027-04-05 → 2027-04-04 (-1d) | 2027-04-07 → 2027-04-05 (-2d) |  | -189.02d → -188d |
| RHD4CZ4L01MV1200 | Trench Backfilling for Medium Voltage Network - (RD-L-1)-Z4-L01-MV | 2027-04-18 → 2027-04-17 (-1d) | 2027-04-20 → 2027-04-18 (-2d) |  | -189.02d → -188d |
| 8411 | **RHD4-02-002-L01-(MV)-Medium Voltage duct banks** | 2027-01-10 → 2027-01-17 (+7d) | 2027-01-19 → 2027-01-26 (+7d) |  |  |
| RHD4CZ4L01MV2100 | Excavation of Duct Banks for Medium Voltage Network - (RD-L-1)-Z4-L01-MV | 2027-01-10 → 2027-01-17 (+7d) | 2027-01-11 → 2027-01-18 (+7d) |  | -136d → -142d |

| ID | Task | Start | Finish | Complete | Total float |
| --- | --- | --- | --- | --- | --- |
| RHD4CZ4L01MV2200 | Installation of Duct Banks for Medium Voltage Network - (RD-L-1)-Z4-L01-MV | 2027-01-12 → 2027-01-19 (+7d) | 2027-01-14 → 2027-01-21 (+7d) |  | -135d → -141d |
| RHD4CZ4L01MV2300 | Pouring of Duct Banks for Medium Voltage Network - (RD-L-1)-Z4-L01-MV | 2027-01-16 → 2027-01-23 (+7d) | 2027-01-17 → 2027-01-24 (+7d) |  | -135d → -141d |
| RHD4CZ4L01MV2400 | Backfilling of Duct Banks for Medium Voltage Network - (RD-L-1)-Z4-L01-MV | 2027-01-18 → 2027-01-25 (+7d) | 2027-01-19 → 2027-01-26 (+7d) |  | -135d → -141d |
| 8412 | **RHD4-02-002-L01-(MV)-Medium Voltage cables 3Cx 500 mm²** | 2027-04-07 → 2027-04-06 (-1d) | 2027-04-22 → 2027-04-20 (-2d) |  |  |
| RHD4CZ4L01MV3100 | Installation of Medium Voltage Cables 3Cx 500 mm² - (RD-L-1)-Z4-L01-MV | 2027-04-07 → 2027-04-06 (-1d) | 2027-04-15 → 2027-04-13 (-2d) |  | -189.02d → -188d |
| RHD4CZ4L01MV3200 | Joints Installation of Medium Voltage Cables 3Cx 500 mm² - (RD-L-1)-Z4-L01-MV | 2027-04-15 → 2027-04-14 (-1d) | 2027-04-18 → 2027-04-15 (-3d) |  | -189.02d → -188d |
| RHD4CZ4L01MV3300 | Testing of Medium Voltage Cables 3Cx 500 mm² - (RD-L-1)-Z4-L01-MV | 2027-04-20 → 2027-04-19 (-1d) | 2027-04-22 → 2027-04-20 (-2d) |  | -189.02d → -188d |
| 8416 | **RHD4-02-002-Z4-L01-Low Voltage Network - LV** | 2027-01-12 → 2027-01-19 (+7d) | 2027-08-18 → 2027-08-14 (-4d) |  |  |
| 8417 | **RHD4-02-002-L01-(LV)-Low Voltage duct banks** | 2027-01-12 → 2027-01-19 (+7d) | 2027-01-20 → 2027-01-27 (+7d) |  |  |
| RHD4CZ4L01LV2100 | Excavation of Duct Banks for Low Voltage Network - (RD-L-1)-Z4-L01-LV | 2027-01-12 → 2027-01-19 (+7d) | 2027-01-13 → 2027-01-20 (+7d) |  | -136d → -142d |
| RHD4CZ4L01LV2200 | Installation of Duct Banks for Low Voltage Network - (RD-L-1)-Z4-L01-LV | 2027-01-14 → 2027-01-21 (+7d) | 2027-01-16 → 2027-01-23 (+7d) |  | -136d → -142d |
| RHD4CZ4L01LV2300 | Pouring of Duct Banks for Low Voltage Network - (RD-L-1)-Z4-L01-LV | 2027-01-17 → 2027-01-24 (+7d) | 2027-01-18 → 2027-01-25 (+7d) |  | -136d → -142d |
| RHD4CZ4L01LV2400 | Backfilling of Duct Banks for Low Voltage Network - (RD-L-1)-Z4-L01-LV | 2027-01-19 → 2027-01-26 (+7d) | 2027-01-20 → 2027-01-27 (+7d) |  | -136d → -142d |
| 8419 | **RHD4-02-002-L01-(LV)-Low Voltage cables** | 2027-08-09 → 2027-08-05 (-4d) | 2027-08-18 → 2027-08-14 (-4d) |  |  |
| RHD4CZ4L01LV3100 | Excavation for Low Voltage Cables for Low Voltage Network - (RD-L-1)-Z4-L01-LV | 2027-08-09 → 2027-08-05 (-4d) | 2027-08-11 → 2027-08-07 (-4d) |  | -163.02d → -160d |
| RHD4CZ4L01LV3200 | Cable Laying of Low Voltage Cables for Low Voltage Network - (RD-L-1)-Z4-L01-LV | 2027-08-11 → 2027-08-08 (-3d) | 2027-08-14 → 2027-08-09 (-5d) |  | -163.02d → -160d |
| RHD4CZ4L01LV3300 | Warning tape and Backfill for Low Voltage Cables for Low Voltage Network - (RD-L-1)-Z4-L01-LV | 2027-08-14 → 2027-08-10 (-4d) | 2027-08-16 → 2027-08-11 (-5d) |  | -163.02d → -160d |
| RHD4CZ4L01LV3400 | Testing of Low Voltage Cables for Low Voltage Network - (RD-L-1)-Z4-L01-LV | 2027-08-16 → 2027-08-12 (-4d) | 2027-08-18 → 2027-08-14 (-4d) |  | -163.02d → -160d |
| 8422 | **RHD4-02-002-Z4-L01-Street Lighting Network - SL** | 2027-06-30 → 2027-06-27 (-3d) | 2027-08-28 → 2027-08-23 (-5d) |  |  |
| 8423 | **RHD4-02-002-L01-(SL)-Street Lighting duct banks** | 2027-06-30 → 2027-06-27 (-3d) | 2027-07-10 → 2027-07-05 (-5d) |  |  |
| RHD4CZ4L01SL2100 | Excavation of Duct Banks for Street Lighting Network - (RD-L-1)-Z4-L01-SL | 2027-06-30 → 2027-06-27 (-3d) | 2027-07-03 → 2027-06-28 (-5d) |  | -149.02d → -146d |
| RHD4CZ4L01SL2200 | Installation of Duct Banks for Street Lighting Network - (RD-L-1)-Z4-L01-SL | 2027-07-03 → 2027-06-29 (-4d) | 2027-07-05 → 2027-06-30 (-5d) |  | -149.02d → -146d |
| RHD4CZ4L01SL2300 | Pouring of Duct Banks for Street Lighting Network - (RD-L-1)-Z4-L01-SL | 2027-07-05 → 2027-07-01 (-4d) | 2027-07-07 → 2027-07-03 (-4d) |  | -149.02d → -146d |
| RHD4CZ4L01SL2400 | Backfilling of Duct Banks for Street Lighting Network - (RD-L-1)-Z4-L01-SL | 2027-07-07 → 2027-07-04 (-3d) | 2027-07-10 → 2027-07-05 (-5d) |  | -149.02d → -146d |
| 8424 | **RHD4-02-002-L01-(SL)-Street Lighting Drawpit** | 2027-08-23 → 2027-08-19 (-4d) | 2027-08-28 → 2027-08-23 (-5d) |  |  |
| RHD4CZ4L01SL5100 | Excavation of Drawpit size 600x600x900mm for Street Lighting Network - (RD-L-1)-Z4-L01-SL | 2027-08-23 → 2027-08-19 (-4d) | 2027-08-25 → 2027-08-21 (-4d) |  | -163.02d → -160d |
| RHD4CZ4L01SL5200 | Installation of Drawpit size 600x600x900mm for Street Lighting Network - (RD-L-1)-Z4-L01-SL | 2027-08-25 → 2027-08-22 (-3d) | 2027-08-28 → 2027-08-23 (-5d) |  | -157.02d → -154d |
| 8425 | **RHD4-02-002-L01-(SL)-Street Lighting cables** | 2027-08-02 → 2027-07-29 (-4d) | 2027-08-21 → 2027-08-16 (-5d) |  |  |
| RHD4CZ4L01SL3100 | Excavation for Street Lighting Cables for Street Lighting Network - (RD-L-1)-Z4-L01-SL | 2027-08-02 → 2027-07-29 (-4d) | 2027-08-04 → 2027-07-31 (-4d) |  | -163.02d → -160d |
| RHD4CZ4L01SL3200 | Cable Laying of Street Lighting Cables for Street Lighting Network - (RD-L-1)-Z4-L01-SL | 2027-08-04 → 2027-08-01 (-3d) | 2027-08-07 → 2027-08-02 (-5d) |  | -163.02d → -160d |
| RHD4CZ4L01SL3300 | Warning tape and Backfill for Street Lighting Cables for Street Lighting Network - (RD-L-1)-Z4-L01-SL | 2027-08-07 → 2027-08-03 (-4d) | 2027-08-09 → 2027-08-04 (-5d) |  | -163.02d → -160d |
| RHD4CZ4L01SL3400 | Testing of Street Lighting Cables for Street Lighting Network - (RD-L-1)-Z4-L01-SL | 2027-08-18 → 2027-08-15 (-3d) | 2027-08-21 → 2027-08-16 (-5d) |  | -163.02d → -160d |
| 8426 | **RHD4-02-002-L01-(SL)-Street Lighting Poles** | 2027-07-26 → 2027-07-22 (-4d) | 2027-08-25 → 2027-08-21 (-4d) |  |  |
| RHD4CZ4L01SL1100 | Excavation for RC Base for Lighting Poles for Street Lighting Network - (RD-L-1)-Z4-L01-SL | 2027-07-26 → 2027-07-22 (-4d) | 2027-07-28 → 2027-07-24 (-4d) |  | -163.02d → -160d |
| RHD4CZ4L01SL1200 | Installation for RC Base for Lighting Poles for Street Lighting Network - (RD-L-1)-Z4-L01-SL | 2027-07-28 → 2027-07-25 (-3d) | 2027-07-31 → 2027-07-26 (-5d) |  | -163.02d → -160d |
| RHD4CZ4L01SL1300 | Backfill for RC Base for Lighting Poles for Street Lighting Network - (RD-L-1)-Z4-L01-SL | 2027-07-31 → 2027-07-27 (-4d) | 2027-08-02 → 2027-07-28 (-5d) |  | -163.02d → -160d |
| RHD4CZ4L01SL1400 | Installation for Lighting Poles for Street Lighting Network - (RD-L-1)-Z4-L01-SL | 2027-08-21 → 2027-08-17 (-4d) | 2027-08-23 → 2027-08-18 (-5d) |  | -163.02d → -160d |
| RHD4CZ4L01SL1500 | Luminaire Installation for Lighting Poles for Street Lighting Network - (RD-L-1)-Z4-L01-SL | 2027-08-23 → 2027-08-19 (-4d) | 2027-08-25 → 2027-08-21 (-4d) |  | -135.02d → -132d |
| 8434 | **RHD4-02-002-Z4-L01-Telecommunications Network - TC** | 2027-08-25 → 2027-08-22 (-3d) | 2027-09-01 → 2027-08-28 (-4d) |  |  |
| 8435 | **RHD4-02-002-L01-(TC)-Telecommunications Ducts** | 2027-08-25 → 2027-08-22 (-3d) | 2027-09-01 → 2027-08-28 (-4d) |  |  |
| RHD4CZ4L01TC2100 | Excavation of HDPE Ducts for Telecom Network - (RD-L-1)-Z4-L01-TC | 2027-08-25 → 2027-08-22 (-3d) | 2027-08-28 → 2027-08-23 (-5d) |  | -163.02d → -160d |
| RHD4CZ4L01TC2200 | Installation of HDPE Ducts for Telecom Network - (RD-L-1)-Z4-L01-TC | 2027-08-28 → 2027-08-24 (-4d) | 2027-08-30 → 2027-08-25 (-5d) |  | -161.02d → -158d |
| RHD4CZ4L01TC2400 | Backfilling of HDPE Ducts for Telecom Network - (RD-L-1)-Z4-L01-TC | 2027-08-30 → 2027-08-26 (-4d) | 2027-09-01 → 2027-08-28 (-4d) |  | -161.02d → -158d |
| 8438 | **RHD4-02-002-Z4-L01-Information and Communication Technologies - ICT** | 2027-08-28 → 2027-08-24 (-4d) | 2027-09-04 → 2027-08-30 (-5d) |  |  |
| 8439 | **RHD4-02-002-L01-(ICT)-Information and Communication Technologies Ducts** | 2027-08-28 → 2027-08-24 (-4d) | 2027-09-04 → 2027-08-30 (-5d) |  |  |
| RHD4CZ4L01ICT2100 | Excavation of HDPE Ducts for ICT Network - (RD-L-1)-Z4-L01-ICT | 2027-08-28 → 2027-08-24 (-4d) | 2027-08-30 → 2027-08-25 (-5d) |  | -163.02d → -160d |
| RHD4CZ4L01ICT2200 | Installation of HDPE Ducts for ICT Network - (RD-L-1)-Z4-L01-ICT | 2027-08-30 → 2027-08-26 (-4d) | 2027-09-01 → 2027-08-28 (-4d) |  | -163.02d → -160d |
| RHD4CZ4L01ICT2400 | Backfilling of HDPE Ducts for ICT Network - (RD-L-1)-Z4-L01-ICT | 2027-09-01 → 2027-08-29 (-3d) | 2027-09-04 → 2027-08-30 (-5d) |  | -163.02d → -160d |
| 8442 | **RHD4-02-002-Z4-L01-Security Network - CCTV** | 2027-09-04 → 2027-08-31 (-4d) | 2027-10-17 → 2027-10-13 (-4d) |  |  |
| 8443 | **RHD4-02-002-L01-(CCTV)-Civil Works** | 2027-09-04 → 2027-08-31 (-4d) | 2027-09-15 → 2027-09-11 (-4d) |  |  |
| RHD4CZ4L01CCTV2100 | Civil Works for Security Network - (RD-L-1)-Z4-L01-CCTV | 2027-09-04 → 2027-08-31 (-4d) | 2027-09-15 → 2027-09-11 (-4d) |  | -163.02d → -160d |
| 2959 | **RHD4-02-002-L01-(CCTV)-CCTV Poles** | 2027-09-15 → 2027-09-12 (-3d) | 2027-09-28 → 2027-09-25 (-3d) |  |  |
| RHD4CZ4L01CCTV1100 | Excavation for RC Base for CCTV Poles for Security Network - (RD-L-1)-Z4-L01-CCTV | 2027-09-15 → 2027-09-12 (-3d) | 2027-09-18 → 2027-09-13 (-5d) |  | -140.06d → -137.05d |
| RHD4CZ4L01CCTV1200 | Installation for RC Base for CCTV Poles for Security Network - (RD-L-1)-Z4-L01-CCTV | 2027-09-18 → 2027-09-14 (-4d) | 2027-09-20 → 2027-09-15 (-5d) |  | -140.06d → -137.05d |
| RHD4CZ4L01CCTV1300 | Backfill for RC Base for CCTV Poles for Security Network - (RD-L-1)-Z4-L01-CCTV | 2027-09-20 → 2027-09-16 (-4d) | 2027-09-22 → 2027-09-19 (-3d) |  | -140.06d → -137.05d |
| RHD4CZ4L01CCTV1400 | Installation for CCTV Poles for Security Network - (RD-L-1)-Z4-L01-CCTV | 2027-09-22 → 2027-09-19 (-3d) | 2027-09-26 → 2027-09-21 (-5d) |  | -140.06d → -137.05d |
| RHD4CZ4L01CCTV1500 | Protection post Installation for CCTV Poles for Security Network - (RD-L-1)-Z4-L01-CCTV | 2027-09-26 → 2027-09-21 (-5d) | 2027-09-28 → 2027-09-25 (-3d) |  | -138.06d → -135.04d |
| 2960 | **RHD4-02-002-L01-(CCTV)-Camera** | 2027-09-28 → 2027-09-25 (-3d) | 2027-09-30 → 2027-09-27 (-3d) |  |  |
| RHD4CZ4L01CCTV3100 | Installation for Cameras for Security Network - (RD-L-1)-Z4-L01-CCTV | 2027-09-28 → 2027-09-25 (-3d) | 2027-09-30 → 2027-09-27 (-3d) |  | -140.06d → -137.05d |
| 2961 | **RHD4-02-002-L01-(CCTV)-Power and Infrastructure** | 2027-09-26 → 2027-09-21 (-5d) | 2027-09-30 → 2027-09-27 (-3d) |  |  |
| RHD4CZ4L01CCTV4100 | Installation of Power outlet, UPS and midspan for PTZ Camerafor Cameras for Security Network - (RD-L-1)-Z4-L01-CCTV | 2027-09-26 → 2027-09-21 (-5d) | 2027-09-28 → 2027-09-25 (-3d) |  | -140.06d → -137.05d |
| RHD4CZ4L01CCTV4200 | Short Range Wireless PoP wireless Bridgefor CCTV Poles for Security Network - (RD-L-1)-Z4-L01-CCTV | 2027-09-28 → 2027-09-25 (-3d) | 2027-09-30 → 2027-09-27 (-3d) |  | -140.06d → -137.05d |
| 2963 | **RHD4-02-002-L01-(CCTV)-CCTV Panels and Components** | 2027-09-30 → 2027-09-27 (-3d) | 2027-10-17 → 2027-10-13 (-4d) |  |  |
| RHD4CZ4L01CCTV6100 | Installation for CCTV Panels for Security Network - (RD-L-1)-Z4-L01-CCTV | 2027-09-30 → 2027-09-27 (-3d) | 2027-10-17 → 2027-10-13 (-4d) |  | -140.06d → -137.05d |
| 2974 | **RHD4-02-002-Z4-A013** |  | 2028-02-03 → 2028-01-31 (-3d) |  |  |
| 3153 | **RHD4-02-002-Z4-A013-Road Works - RD** |  | 2028-02-03 → 2028-01-31 (-3d) |  |  |
| 3156 | **RHD4-02-002-A013-(RD)-Bituminous base course Two Layers, including (MC1)&(RC2)** |  | 2027-08-10 → 2027-07-27 (-14d) |  |  |
| RHD4CZ4A013RD3100 | Supply, lay and Asphaltic base course including Prime Coat (MC1) for 1st Layer - (RD-A-1 /3)-Z4-A013-RD |  | 2027-02-18 → 2027-02-09 (-9d) | 82% → 90% | -147.02d → -134d |
| RHD4CZ4A013RD3200 | Supply, lay and Asphaltic base course including Tack Coat (RC2) for 2nd Layer - (RD-A-1 /3)-Z4-A013-RD | 2027-07-29 → 2027-07-17 (-12d) | 2027-08-10 → 2027-07-27 (-14d) |  | -122.02d → -111d |
| 3158 | **RHD4-02-002-A013-(RD)-Precast Concrete Curb** | 2027-08-10 → 2027-07-28 (-13d) | 2027-08-19 → 2027-08-05 (-14d) |  |  |

| ID | Task | Start | Finish | Complete | Total float |
| --- | --- | --- | --- | --- | --- |
| RHD4CZ4A013RD5100 | Supply and installation Precast Concrete Kerb for Roads - (RD-A-1 /3)-Z4-A013-RD | 2027-08-10 → 2027-07-28 (-13d) | 2027-08-19 → 2027-08-05 (-14d) |  | -122.02d → -111d |
| 3161 | **RHD4-02-002-A013-(RD)-Traffic Signage** | 2027-10-02 → 2027-09-28 (-4d) | 2027-10-12 → 2027-10-07 (-5d) |  |  |
| RHD4CZ4A013RD8100 | Installation of Traffic Signage for Road Network - (RD-A-1 /3)-Z4-A013-RD | 2027-10-02 → 2027-09-28 (-4d) | 2027-10-12 → 2027-10-07 (-5d) |  | -158.02d → -155d |
| 3157 | **RHD4-02-002-A013-(RD)-Bituminous concrete wearing course including tack coat (RC2)** | 2027-08-19 → 2027-08-07 (-12d) | 2027-08-24 → 2027-08-10 (-14d) |  |  |
| RHD4CZ4A013RD4100 | Supply, lay and compaction Asphaltic wearing course including tack Coat (RC2)for Road Network - (RD-A-1 /3)-Z4-A013-RD | 2027-08-19 → 2027-08-07 (-12d) | 2027-08-24 → 2027-08-10 (-14d) |  | -121.02d → -110d |
| 3160 | **RHD4-02-002-A013-(RD)-Pavement Marking** | 2028-01-31 → 2028-01-29 (-2d) | 2028-02-03 → 2028-01-31 (-3d) |  |  |
| RHD4CZ4A013RD7100 | Pavement Markings for Road Network - (RD-A-1 /3)-Z4-A013-RD | 2028-01-31 → 2028-01-29 (-2d) | 2028-02-03 → 2028-01-31 (-3d) |  | -156.02d → -154d |
| 2978 | **RHD4-02-002-Z4-A013-Storm Network - ST** |  | 2027-03-25 → 2027-03-16 (-9d) |  |  |
| 2428 | **RHD4-02-002-A013-(ST)-MH Works - 1200 mm diameter** |  | 2027-02-18 → 2027-02-09 (-9d) |  |  |
| RHD4CZ4A013ST3100 | Excavation and PC Blinding works for MH 1200 mm - (RD-A-1 /3)-Z4-A013-ST |  | 2027-02-09 → 2026-11-12 A (-89d) | 64% → 100% | -197.02d → none |
| RHD4CZ4A013ST3200 | Installation of Base for MH 1200 mm - (RD-A-1 /3)-Z4-A013-ST |  | 2027-02-11 → 2026-11-08 A (-95d) | 64% → 100% | -157.02d → none |
| RHD4CZ4A013ST3300 | MH Ring and C.Slab works and Backfilling works for MH 1200 mm - (RD-A-1 /3)-Z4-A013-ST |  | 2027-02-14 → 2026-11-09 A (-97d) | 64% → 100% | -157.02d → none |
| RHD4CZ4A013ST3400 | Steel Cover for MH 1200 mm - (RD-A-1 /3)-Z4-A013-ST | 2027-02-14 → 2027-02-06 (-8d) | 2027-02-16 → 2027-02-07 (-9d) |  | -142.02d → -133d |
| RHD4CZ4A013ST3500 | Finishing, Benching, Testing works for MH 1200 mm - (RD-A-1 /3)-Z4-A013-ST | 2027-02-16 → 2027-02-08 (-8d) | 2027-02-18 → 2027-02-09 (-9d) |  | -142.02d → -133d |
| 2416 | **RHD4-02-002-A013-(ST)-GRP Pipes - 800 mm diameter** |  | 2027-02-16 → 2027-02-07 (-9d) |  |  |
| RHD4CZ4A013ST1404 | Primary Test for GRP Pipe Line 800 mm - (RD-A-1 /3)-Z4-A013-ST | 2027-02-14 → 2027-02-06 (-8d) | 2027-02-16 → 2027-02-07 (-9d) |  | -150.02d → -137d |
| 2414 | **RHD4-02-002-A013-(ST)-GRP Pipes - 600 mm diameter** |  | 2027-02-11 → 2027-02-07 (-4d) |  |  |
| RHD4CZ4A013ST1402 | Primary Test for GRP Pipe Line 600 mm - (RD-A-1 /3)-Z4-A013-ST | 2027-02-09 → 2027-02-06 (-3d) | 2027-02-11 → 2027-02-07 (-4d) |  | -146.02d → -137d |
| 2412 | **RHD4-02-002-A013-(ST)-GRP Pipes - 400 mm diameter** |  | 2027-02-11 → 2027-02-07 (-4d) |  |  |
| RHD4CZ4A013ST1400 | Primary Test for GRP Pipe Line 400 mm - (RD-A-1 /3)-Z4-A013-ST | 2027-02-09 → 2027-02-06 (-3d) | 2027-02-11 → 2027-02-07 (-4d) |  | -146.02d → -137d |
| 2413 | **RHD4-02-002-A013-(ST)-GRP Pipes - 500 mm diameter** |  | 2027-02-11 → 2027-02-07 (-4d) |  |  |
| RHD4CZ4A013ST1401 | Primary Test for GRP Pipe Line 500 mm - (RD-A-1 /3)-Z4-A013-ST | 2027-02-09 → 2027-02-06 (-3d) | 2027-02-11 → 2027-02-07 (-4d) |  | -146.02d → -137d |
| 2997 | **RHD4-02-002-A013-(ST)-MH Works - 2000 mm diameter** |  | 2027-03-02 → 2027-02-20 (-10d) |  |  |
| RHD4CZ4A013ST3402 | Steel Cover for MH 2000 mm - (RD-A-1 /3)-Z4-A013-ST | 2027-02-16 → 2027-02-08 (-8d) | 2027-02-23 → 2027-02-13 (-10d) |  | -150.02d → -137d |
| RHD4CZ4A013ST3502 | Finishing, Benching, Testing works for MH 2000 mm - (RD-A-1 /3)-Z4-A013-ST | 2027-02-23 → 2027-02-14 (-9d) | 2027-03-02 → 2027-02-20 (-10d) |  | -150.02d → -137d |
| 2996 | **RHD4-02-002-A013-(ST)-MH Works - 1500 mm diameter** |  | 2027-03-16 → 2027-03-03 (-13d) |  |  |
| RHD4CZ4A013ST3401 | Steel Cover for MH 1500 mm - (RD-A-1 /3)-Z4-A013-ST | 2027-03-02 → 2027-02-21 (-9d) | 2027-03-06 → 2027-02-24 (-10d) |  | -113.02d → -106d |
| RHD4CZ4A013ST3501 | Finishing, Benching, Testing works for MH 1500 mm - (RD-A-1 /3)-Z4-A013-ST | 2027-03-06 → 2027-02-25 (-9d) | 2027-03-16 → 2027-03-03 (-13d) |  | -113.02d → -106d |
| 2987 | **RHD4-02-002-A013-(ST)-GRP Pipes - 1200 mm diameter** |  | 2027-03-06 → 2027-02-24 (-10d) |  |  |
| RHD4CZ4A013ST1408 | Primary Test for GRP Pipe Line 1200 mm - (RD-A-1 /3)-Z4-A013-ST | 2027-03-02 → 2027-02-21 (-9d) | 2027-03-06 → 2027-02-24 (-10d) |  | -150.02d → -137d |
| 2986 | **RHD4-02-002-A013-(ST)-GRP Pipes - 1100 mm diameter** |  | 2027-03-08 → 2027-02-27 (-9d) |  |  |
| RHD4CZ4A013ST1407 | Primary Test for GRP Pipe Line 1100 mm - (RD-A-1 /3)-Z4-A013-ST | 2027-03-06 → 2027-02-25 (-9d) | 2027-03-08 → 2027-02-27 (-9d) |  | -113.02d → -106d |
| 2985 | **RHD4-02-002-A013-(ST)-GRP Pipes - 1000 mm diameter** |  | 2027-03-24 → 2027-03-15 (-9d) |  |  |
| RHD4CZ4A013ST1106 | Excavation works for GRP Pipe Line 1000 mm - (RD-A-1 /3)-Z4-A013-ST |  | 2027-03-13 → 2027-02-28 (-13d) |  | -150.02d → -137d |
| RHD4CZ4A013ST1206 | Bedding works for GRP Pipe Line 1000 mm - (RD-A-1 /3)-Z4-A013-ST |  | 2027-03-16 → 2027-03-03 (-13d) |  | -119.02d → -112d |
| RHD4CZ4A013ST1306 | Installing for GRP Pipe Line 1000 mm - (RD-A-1 /3)-Z4-A013-ST |  | 2027-03-18 → 2027-03-06 (-12d) |  | -119.02d → -112d |
| RHD4CZ4A013ST1506 | Backfilling and warning tape works for GRP Pipe Line 1000 mm - (RD-A-1 /3)-Z4-A013-ST |  | 2027-03-24 → 2027-03-15 (-9d) |  | -118.02d → -111d |
| RHD4CZ4A013ST1406 | Primary Test for GRP Pipe Line 1000 mm - (RD-A-1 /3)-Z4-A013-ST | 2027-03-18 → 2027-03-07 (-11d) | 2027-03-21 → 2027-03-08 (-13d) |  | -119.02d → -112d |
| 2984 | **RHD4-02-002-A013-(ST)-GRP Pipes - 900 mm diameter** |  | 2027-03-23 → 2027-03-14 (-9d) |  |  |
| RHD4CZ4A013ST1405 | Primary Test for GRP Pipe Line 900 mm - (RD-A-1 /3)-Z4-A013-ST | 2027-03-21 → 2027-03-13 (-8d) | 2027-03-23 → 2027-03-14 (-9d) |  | -119.02d → -112d |
| 2982 | **RHD4-02-002-A013-(ST)-GRP Pipes - 700 mm diameter** |  | 2027-03-25 → 2027-03-16 (-9d) |  |  |
| RHD4CZ4A013ST1403 | Primary Test for GRP Pipe Line 700 mm - (RD-A-1 /3)-Z4-A013-ST | 2027-03-23 → 2027-03-15 (-8d) | 2027-03-25 → 2027-03-16 (-9d) |  | -119.02d → -112d |
| 2993 | **RHD4-02-002-A013-(ST)-UPVC Pipes - 300 mm diameter** |  | 2027-03-21 → 2027-03-08 (-13d) |  |  |
| RHD4CZ4A013ST2400 | Primary Test for UPVC Pipe Line 300 mm - (RD-A-1 /3)-Z4-A013-ST | 2027-03-15 → 2027-03-03 (-12d) | 2027-03-21 → 2027-03-08 (-13d) |  | -88.02d → -81d |
| 3001 | **RHD4-02-002-A013-(ST)-Concrete Encasement** |  | 2027-03-15 → 2027-03-02 (-13d) |  |  |
| RHD4CZ4A013ST6100 | Pipe Encasement for Storm Pipelines - (RD-A-1 /3)-Z4-A013-ST |  | 2027-03-15 → 2027-03-02 (-13d) |  | -150.02d → -137d |
| 3002 | **RHD4-02-002-Z4-A013-Catch Basin - ST** |  | 2027-03-21 → 2027-03-16 (-5d) |  |  |
| 3003 | **RHD4-02-002-A013-(ST)-Single Catch Basin Works** |  | 2027-03-21 → 2027-03-16 (-5d) |  |  |
| RHD4CZ4A013ST7300 | Rings & C.Slab & Final Backfill for Single Catch Basin - (RD-A-1 /3)-Z4-A013-ST |  | 2027-02-20 → 2027-02-15 (-5d) |  | -135.02d → -132d |
| RHD4CZ4A013ST7400 | Steel Cover for Single Catch Basin - (RD-A-1 /3)-Z4-A013-ST | 2027-02-20 → 2027-02-16 (-4d) | 2027-03-01 → 2027-02-24 (-5d) |  | -135.02d → -132d |
| RHD4CZ4A013ST7500 | Finishing and Insulation works for Single Catch Basin - (RD-A-1 /3)-Z4-A013-ST | 2027-03-01 → 2027-02-25 (-4d) | 2027-03-21 → 2027-03-16 (-5d) |  | -135.02d → -132d |
| 3004 | **RHD4-02-002-A013-(ST)-Double Catch Basin Works** |  | 2027-03-17 → 2027-03-04 (-13d) |  |  |
| RHD4CZ4A013ST8300 | Rings & C.Slab & Final Backfillfor Double Catch Basin - (RD-A-1 /3)-Z4-A013-ST |  | 2027-03-13 → 2027-02-28 (-13d) |  | -144.02d → -137d |
| RHD4CZ4A013ST8400 | Steel Cover for Double Catch Basin - (RD-A-1 /3)-Z4-A013-ST | 2027-03-13 → 2027-03-01 (-12d) | 2027-03-15 → 2027-03-02 (-13d) |  | -144.02d → -137d |
| RHD4CZ4A013ST8500 | Finishing and Insulation works for Double Catch Basin - (RD-A-1 /3)-Z4-A013-ST | 2027-03-15 → 2027-03-03 (-12d) | 2027-03-17 → 2027-03-04 (-13d) |  | -144.02d → -137d |
| 3064 | **RHD4-02-002-Z4-A013-Potable Network - PT** | 2027-03-13 → 2026-10-01 (-163d) | 2027-05-04 → 2027-04-08 (-26d) |  |  |
| 3068 | **RHD4-02-002-A013-(PT)-HDPE Pipes - 400 mm diameter** | 2027-03-13 → 2026-10-01 (-163d) | 2027-04-22 → 2027-03-24 (-29d) |  |  |
| RHD4CZ4A013PT1103 | Excavation works for HDPE Pipline 400 mm - (RD-A-1 /3)-Z4-A013-PT | 2027-03-13 → 2026-10-01 A (-163d) | 2027-03-21 → 2027-03-03 (-18d) | 0% → 71% | -122.02d → -111d |
| RHD4CZ4A013PT1203 | Bedding works for HDPE Pipline 400 mm - (RD-A-1 /3)-Z4-A013-PT | 2027-03-21 → 2026-10-10 A (-162d) | 2027-03-29 → 2027-03-07 (-22d) | 0% → 15% | -122.02d → -98d |
| RHD4CZ4A013PT1303 | Installing for HDPE Pipline 400 mm - (RD-A-1 /3)-Z4-A013-PT | 2027-03-29 → 2026-10-18 A (-162d) | 2027-04-08 → 2027-03-14 (-25d) | 0% → 74% | -122.02d → -98d |
| RHD4CZ4A013PT1503 | Backfilling and warning tape works for HDPE Pipline 400 mm - (RD-A-1 /3)-Z4-A013-PT | 2027-04-15 → 2026-11-08 A (-158d) | 2027-04-22 → 2027-03-24 (-29d) | 0% → 97% | -122.02d → -98d |
| RHD4CZ4A013PT1403 | Primary Test for HDPE Pipline 400 mm - (RD-A-1 /3)-Z4-A013-PT | 2027-04-08 → 2027-03-15 (-24d) | 2027-04-15 → 2027-03-21 (-25d) |  | -122.02d → -98d |
| 3071 | **RHD4-02-002-A013-(PT)-Butterfly Valve Chamber** | 2027-03-21 → 2027-03-04 (-17d) | 2027-04-25 → 2027-03-27 (-29d) |  |  |
| RHD4CZ4A013PT2100 | Excavation and Bedding for Butterfly Valve Chamber for Potable Water Network - (RD-A-1 /3)-Z4-A013-PT | 2027-03-21 → 2027-03-04 (-17d) | 2027-03-23 → 2027-03-06 (-17d) |  | -100.02d → -89d |
| RHD4CZ4A013PT2200 | PC works for Butterfly Valve Chamber for Potable Water Network - (RD-A-1 /3)-Z4-A013-PT | 2027-03-23 → 2027-03-07 (-16d) | 2027-03-25 → 2027-03-08 (-17d) |  | -100.02d → -89d |
| RHD4CZ4A013PT2300 | Installation for Butterfly Valve Chamber for Potable Water Network - (RD-A-1 /3)-Z4-A013-PT | 2027-03-25 → 2027-03-13 (-12d) | 2027-03-28 → 2027-03-14 (-14d) |  | -100.02d → -89d |
| RHD4CZ4A013PT2400 | Backfilling works for Butterfly Valve Chamber for Potable Water Network - (RD-A-1 /3)-Z4-A013-PT | 2027-04-22 → 2027-03-25 (-28d) | 2027-04-25 → 2027-03-27 (-29d) |  | -122.02d → -98d |
| 3072 | **RHD4-02-002-A013-(PT)-Butterfly Valves** | 2027-03-28 → 2027-03-15 (-13d) | 2027-04-27 → 2027-03-29 (-29d) |  |  |
| RHD4CZ4A013PT3101 | Installation for Butterfly Valves for Potable Water Network - (RD-A-1 /3)-Z4-A013-PT | 2027-03-28 → 2027-03-15 (-13d) | 2027-03-30 → 2027-03-16 (-14d) |  | -100.02d → -89d |
| RHD4CZ4A013PT3201 | Stem and Service box for Butterfly Valves for Potable Water Network - (RD-A-1 /3)-Z4-A013-PT | 2027-04-25 → 2027-03-28 (-28d) | 2027-04-27 → 2027-03-29 (-29d) |  | -122.02d → -98d |

| ID | Task | Start | Finish | Total float |
| --- | --- | --- | --- | --- |
| 3073 | **RHD4-02-002-A013-(PT)-Wash out Valve Chambers** | 2027-03-21 → 2027-03-04 (-17d) | 2027-03-30 → 2027-03-16 (-14d) |  |
| RHD4CZ4A013PT2101 | Excavation and Bedding for Wash out Valve Chambers for Potable Water Network - (RD-A-1 /3)-Z4-A013-PT | 2027-03-21 → 2027-03-04 (-17d) | 2027-03-23 → 2027-03-06 (-17d) | -100.02d → -89d |
| RHD4CZ4A013PT2201 | PC works for Wash out Valve Chambers for Potable Water Network - (RD-A-1 /3)-Z4-A013-PT | 2027-03-23 → 2027-03-07 (-16d) | 2027-03-25 → 2027-03-08 (-17d) | -100.02d → -89d |
| RHD4CZ4A013PT2301 | Installation for Wash out Valve Chambers for Potable Water Network - (RD-A-1 /3)-Z4-A013-PT | 2027-03-25 → 2027-03-13 (-12d) | 2027-03-28 → 2027-03-14 (-14d) | -100.02d → -89d |
| RHD4CZ4A013PT2401 | Backfilling works for Wash out Valve Chambers for Potable Water Network - (RD-A-1 /3)-Z4-A013-PT | 2027-03-28 → 2027-03-15 (-13d) | 2027-03-30 → 2027-03-16 (-14d) | -100.02d → -89d |
| 3074 | **RHD4-02-002-A013-(PT)-Wash out Valves** | 2027-03-28 → 2027-03-15 (-13d) | 2027-04-01 → 2027-03-18 (-14d) |  |
| RHD4CZ4A013PT3102 | Installation for Wash out Valves for Potable Water Network - (RD-A-1 /3)-Z4-A013-PT | 2027-03-28 → 2027-03-15 (-13d) | 2027-03-30 → 2027-03-16 (-14d) | -100.02d → -89d |
| RHD4CZ4A013PT3202 | Stem and Service box for Wash out Valves for Potable Water Network - (RD-A-1 /3)-Z4-A013-PT | 2027-03-30 → 2027-03-17 (-13d) | 2027-04-01 → 2027-03-18 (-14d) | -100.02d → -89d |
| 3075 | **RHD4-02-002-A013-(PT)-Air Valve Chambers** | 2027-03-21 → 2027-03-04 (-17d) | 2027-03-30 → 2027-03-16 (-14d) |  |
| RHD4CZ4A013PT2102 | Excavation and Bedding for Air Valve Chambers for Potable Water Network - (RD-A-1 /3)-Z4-A013-PT | 2027-03-21 → 2027-03-04 (-17d) | 2027-03-23 → 2027-03-06 (-17d) | -100.02d → -89d |
| RHD4CZ4A013PT2202 | PC works for Air Valve Chambers for Potable Water Network - (RD-A-1 /3)-Z4-A013-PT | 2027-03-23 → 2027-03-07 (-16d) | 2027-03-25 → 2027-03-08 (-17d) | -100.02d → -89d |
| RHD4CZ4A013PT2302 | Installation for Air Valve Chambers for Potable Water Network - (RD-A-1 /3)-Z4-A013-PT | 2027-03-25 → 2027-03-13 (-12d) | 2027-03-28 → 2027-03-14 (-14d) | -100.02d → -89d |
| RHD4CZ4A013PT2402 | Backfilling works for Air Valve Chambers for Potable Water Network - (RD-A-1 /3)-Z4-A013-PT | 2027-03-28 → 2027-03-15 (-13d) | 2027-03-30 → 2027-03-16 (-14d) | -100.02d → -89d |
| 3076 | **RHD4-02-002-A013-(PT)-Air Valves** | 2027-03-28 → 2027-03-15 (-13d) | 2027-04-01 → 2027-03-18 (-14d) |  |
| RHD4CZ4A013PT3103 | Installation for Air Valves for Potable Water Network - (RD-A-1 /3)-Z4-A013-PT | 2027-03-28 → 2027-03-15 (-13d) | 2027-03-30 → 2027-03-16 (-14d) | -100.02d → -89d |
| RHD4CZ4A013PT3203 | Stem and Service box for Air Valves for Potable Water Network - (RD-A-1 /3)-Z4-A013-PT | 2027-03-30 → 2027-03-17 (-13d) | 2027-04-01 → 2027-03-18 (-14d) | -100.02d → -89d |
| 3077 | **RHD4-02-002-A013-(PT)-Fire Hydrant** | 2027-04-15 → 2027-03-22 (-24d) | 2027-05-04 → 2027-04-08 (-26d) |  |
| RHD4CZ4A013PT4100 | Excavation and Bedding and Pipe Installation for Fire Hydrant - (RD-A-1 /3)-Z4-A013-PT | 2027-04-15 → 2027-03-22 (-24d) | 2027-04-21 → 2027-03-27 (-25d) | -119.02d → -98d |
| RHD4CZ4A013PT4200 | Valve Installation for Fire Hydrant - (RD-A-1 /3)-Z4-A013-PT | 2027-04-21 → 2027-03-28 (-24d) | 2027-04-25 → 2027-03-30 (-26d) | -119.02d → -98d |
| RHD4CZ4A013PT4300 | Stem for Fire Hydrant - (RD-A-1 /3)-Z4-A013-PT | 2027-04-25 → 2027-03-31 (-25d) | 2027-04-28 → 2027-04-03 (-25d) | -119.02d → -98d |
| RHD4CZ4A013PT4400 | Fire Installation for Fire Hydrant - (RD-A-1 /3)-Z4-A013-PT | 2027-04-28 → 2027-04-04 (-24d) | 2027-05-02 → 2027-04-06 (-26d) | -119.02d → -98d |
| RHD4CZ4A013PT4500 | Protection Barriers for Fire Hydrant - (RD-A-1 /3)-Z4-A013-PT | 2027-05-02 → 2027-04-07 (-25d) | 2027-05-04 → 2027-04-08 (-26d) | -119.02d → -98d |
| 3079 | **RHD4-02-002-Z4-A013-Irrigation Network - IRR** | 2027-03-21 → 2027-03-04 (-17d) | 2027-05-26 → 2027-05-08 (-18d) |  |
| 3083 | **RHD4-02-002-A013-(IRR)-HDPE Pipes - 250 mm diameter** | 2027-03-21 → 2027-03-04 (-17d) | 2027-05-05 → 2027-04-21 (-14d) |  |
| RHD4CZ4A013IRR1103 | Excavation works for HDPE Pipline 250 mm - (RD-A-1 /3)-Z4-A013-IRR | 2027-03-21 → 2027-03-04 (-17d) | 2027-04-01 → 2027-03-18 (-14d) | -122.02d → -111d |
| RHD4CZ4A013IRR1203 | Bedding works for HDPE Pipline 250 mm - (RD-A-1 /3)-Z4-A013-IRR | 2027-04-01 → 2027-03-20 (-12d) | 2027-04-11 → 2027-03-28 (-14d) | -122.02d → -111d |
| RHD4CZ4A013IRR1303 | Installing for HDPE Pipline 250 mm - (RD-A-1 /3)-Z4-A013-IRR | 2027-04-11 → 2027-03-29 (-13d) | 2027-04-22 → 2027-04-08 (-14d) | -122.02d → -111d |
| RHD4CZ4A013IRR1403 | Primary Test for HDPE Pipline 250 mm - (RD-A-1 /3)-Z4-A013-IRR | 2027-04-22 → 2027-04-10 (-12d) | 2027-04-26 → 2027-04-12 (-14d) | -122.02d → -111d |
| RHD4CZ4A013IRR1503 | Backfilling and warning tape works for HDPE Pipline 250 mm - (RD-A-1 /3)-Z4-A013-IRR | 2027-04-26 → 2027-04-13 (-13d) | 2027-05-05 → 2027-04-21 (-14d) | -122.02d → -111d |
| 1770 | **RHD4-02-002-A013-(IRR)-Air Valves** | 2027-04-22 → 2027-04-10 (-12d) | 2027-04-27 → 2027-04-13 (-14d) |  |
| RHD4CZ4A013IRR3103 | Installation for Air Valves for Irrigation Network - (RD-A-1 /3)-Z4-A013-IRR | 2027-04-22 → 2027-04-10 (-12d) | 2027-04-25 → 2027-04-11 (-14d) | -112.02d → -101d |
| RHD4CZ4A013IRR3203 | Stem and Service box for Air Valves for Irrigation Network - (RD-A-1 /3)-Z4-A013-IRR | 2027-04-25 → 2027-04-12 (-13d) | 2027-04-27 → 2027-04-13 (-14d) | -112.02d → -101d |
| 6107 | **RHD4-02-002-A013-(IRR)-HDPE Pipes - 160 mm diameter** | 2027-05-05 → 2027-04-22 (-13d) | 2027-05-22 → 2027-05-03 (-19d) |  |
| RHD4CZ4A013IRR1100 | Excavation works for HDPE Pipline 160 mm - (RD-A-1 /3)-Z4-A013-IRR | 2027-05-05 → 2027-04-22 (-13d) | 2027-05-08 → 2027-04-24 (-14d) | -122.02d → -111d |
| RHD4CZ4A013IRR1200 | Bedding works for HDPE Pipline 160 mm - (RD-A-1 /3)-Z4-A013-IRR | 2027-05-08 → 2027-04-25 (-13d) | 2027-05-10 → 2027-04-26 (-14d) | -110.02d → -99d |
| RHD4CZ4A013IRR1300 | Installing for HDPE Pipline 160 mm - (RD-A-1 /3)-Z4-A013-IRR | 2027-05-10 → 2027-04-27 (-13d) | 2027-05-12 → 2027-04-28 (-14d) | -110.02d → -99d |
| RHD4CZ4A013IRR1400 | Primary Test for HDPE Pipline 160 mm - (RD-A-1 /3)-Z4-A013-IRR | 2027-05-12 → 2027-04-29 (-13d) | 2027-05-19 → 2027-05-01 (-18d) | -110.02d → -99d |
| RHD4CZ4A013IRR1500 | Backfilling and warning tape works for HDPE Pipline 160 mm - (RD-A-1 /3)-Z4-A013-IRR | 2027-05-19 → 2027-05-02 (-17d) | 2027-05-22 → 2027-05-03 (-19d) | -110.02d → -99d |
| 6115 | **RHD4-02-002-A013-(IRR)-Gate Valves (Direct Buried)** | 2027-05-10 → 2027-04-27 (-13d) | 2027-05-26 → 2027-05-08 (-18d) |  |
| RHD4CZ4A013IRR3100 | Installation for Direct Buried Gate Valves - (RD-A-1 /3)-Z4-A013-IRR | 2027-05-10 → 2027-04-27 (-13d) | 2027-05-19 → 2027-05-01 (-18d) | -108.02d → -97d |
| RHD4CZ4A013IRR3200 | Stem and Service box for Direct Buried Gate Valves - (RD-A-1 /3)-Z4-A013-IRR | 2027-05-22 → 2027-05-04 (-18d) | 2027-05-26 → 2027-05-08 (-18d) | -110.02d → -99d |
| 1769 | **RHD4-02-002-A013-(IRR)-Air Valve Chamber** | 2027-04-01 → 2027-03-20 (-12d) | 2027-04-11 → 2027-03-28 (-14d) |  |
| RHD4CZ4A013IRR2102 | Excavation and Bedding for Valve Chamber for Irrigation Network - (RD-A-1 /3)-Z4-A013-IRR | 2027-04-01 → 2027-03-20 (-12d) | 2027-04-04 → 2027-03-21 (-14d) | -121.02d → -110d |
| RHD4CZ4A013IRR2202 | PC works for Valve Chamber for Irrigation Network - (RD-A-1 /3)-Z4-A013-IRR | 2027-04-04 → 2027-03-22 (-13d) | 2027-04-06 → 2027-03-23 (-14d) | -100.02d → -89d |
| RHD4CZ4A013IRR2302 | Installation for Valve Chamber for Irrigation Network - (RD-A-1 /3)-Z4-A013-IRR | 2027-04-06 → 2027-03-24 (-13d) | 2027-04-08 → 2027-03-25 (-14d) | -100.02d → -89d |
| RHD4CZ4A013IRR2402 | Backfilling works for Valve Chamber for Irrigation Network - (RD-A-1 /3)-Z4-A013-IRR | 2027-04-08 → 2027-03-27 (-12d) | 2027-04-11 → 2027-03-28 (-14d) | -100.02d → -89d |
| 3113 | **RHD4-02-002-Z4-A013-Medium Voltage Network - MV** | 2027-02-18 → 2027-02-10 (-8d) | 2027-10-14 → 2027-10-12 (-2d) |  |
| 3115 | **RHD4-02-002-A013-(MV)-Medium Voltage duct banks** | 2027-02-18 → 2027-02-10 (-8d) | 2027-03-08 → 2027-02-27 (-9d) |  |
| RHD4CZ4A013MV2100 | Excavation of Duct Banks for Medium Voltage Network - (RD-A-1 /3)-Z4-A013-MV | 2027-02-18 → 2027-02-10 (-8d) | 2027-02-23 → 2027-02-13 (-10d) | -142.02d → -133d |
| RHD4CZ4A013MV2200 | Installation of Duct Banks for Medium Voltage Network - (RD-A-1 /3)-Z4-A013-MV | 2027-02-23 → 2027-02-14 (-9d) | 2027-03-01 → 2027-02-18 (-11d) | -142.02d → -133d |
| RHD4CZ4A013MV2300 | Pouring of Duct Banks for Medium Voltage Network - (RD-A-1 /3)-Z4-A013-MV | 2027-03-01 → 2027-02-20 (-9d) | 2027-03-04 → 2027-02-23 (-9d) | -142.02d → -133d |
| RHD4CZ4A013MV2400 | Backfilling of Duct Banks for Medium Voltage Network - (RD-A-1 /3)-Z4-A013-MV | 2027-03-04 → 2027-02-24 (-8d) | 2027-03-08 → 2027-02-27 (-9d) | -142.02d → -133d |
| 3114 | **RHD4-02-002-A013-(MV)-Medium Voltage cable trench** | 2027-08-16 → 2027-08-15 (-1d) | 2027-09-01 → 2027-08-30 (-2d) |  |
| RHD4CZ4A013MV1100 | Excavation for Medium Voltage Trench - (RD-A-1 /3)-Z4-A013-MV | 2027-08-16 → 2027-08-15 (-1d) | 2027-08-24 → 2027-08-22 (-2d) | -153.02d → -152d |
| RHD4CZ4A013MV1200 | Trench Backfilling for Medium Voltage Network - (RD-A-1 /3)-Z4-A013-MV | 2027-08-24 → 2027-08-23 (-1d) | 2027-09-01 → 2027-08-30 (-2d) | -128.02d → -127d |
| 3116 | **RHD4-02-002-A013-(MV)-Medium Voltage cables 3Cx 500 mm²** | 2027-08-24 → 2027-08-23 (-1d) | 2027-10-12 → 2027-10-10 (-2d) |  |
| RHD4CZ4A013MV3100 | Installation of Medium Voltage Cables 3Cx 500 mm² - (RD-A-1 /3)-Z4-A013-MV | 2027-08-24 → 2027-08-23 (-1d) | 2027-09-13 → 2027-09-11 (-2d) | -151.02d → -150d |
| RHD4CZ4A013MV3200 | Joints Installation of Medium Voltage Cables 3Cx 500 mm² - (RD-A-1 /3)-Z4-A013-MV | 2027-09-13 → 2027-09-12 (-1d) | 2027-09-29 → 2027-09-27 (-2d) | -151.02d → -150d |
| RHD4CZ4A013MV3300 | Testing of Medium Voltage Cables 3Cx 500 mm² - (RD-A-1 /3)-Z4-A013-MV | 2027-09-29 → 2027-09-28 (-1d) | 2027-10-12 → 2027-10-10 (-2d) | -151.02d → -150d |
| 1982 | **RHD4-02-002-A013-(MV)-Medium Voltage cables 3Cx 50 mm²** | 2027-10-12 → 2027-10-11 (-1d) | 2027-10-14 → 2027-10-12 (-2d) |  |
| RHD4CZ4A013MV3401 | Termination of Medium Voltage Cables 3Cx 50 mm² - (RD-A-1 /3)-Z4-A013-MV | 2027-10-12 → 2027-10-11 (-1d) | 2027-10-14 → 2027-10-12 (-2d) | -151.02d → -150d |
| 4255 | **RHD4-02-002-Z4-A013-Low Voltage Network - LV** | 2027-04-04 → 2027-03-22 (-13d) | 2027-09-27 → 2027-09-25 (-2d) |  |
| 4256 | **RHD4-02-002-A013-(LV)-Low Voltage duct banks** | 2027-04-04 → 2027-03-22 (-13d) | 2027-04-14 → 2027-03-31 (-14d) |  |
| RHD4CZ4A013LV2100 | Excavation of Duct Banks for Low Voltage Network - (RD-A-1 /3)-Z4-A013-LV | 2027-04-04 → 2027-03-22 (-13d) | 2027-04-06 → 2027-03-23 (-14d) | -121.02d → -110d |
| RHD4CZ4A013LV2200 | Installation of Duct Banks for Low Voltage Network - (RD-A-1 /3)-Z4-A013-LV | 2027-04-06 → 2027-03-24 (-13d) | 2027-04-10 → 2027-03-27 (-14d) | -118.02d → -107d |
| RHD4CZ4A013LV2300 | Pouring of Duct Banks for Low Voltage Network - (RD-A-1 /3)-Z4-A013-LV | 2027-04-10 → 2027-03-28 (-13d) | 2027-04-12 → 2027-03-29 (-14d) | -118.02d → -107d |
| RHD4CZ4A013LV2400 | Backfilling of Duct Banks for Low Voltage Network - (RD-A-1 /3)-Z4-A013-LV | 2027-04-12 → 2027-03-30 (-13d) | 2027-04-14 → 2027-03-31 (-14d) | -118.02d → -107d |
| 4257 | **RHD4-02-002-A013-(LV)-Low Voltage Drawpit** | 2027-09-21 → 2027-09-20 (-1d) | 2027-09-27 → 2027-09-25 (-2d) |  |
| RHD4CZ4A013LV5100 | Excavation of Drawpit size 900x900x1000mm for Low Voltage Network - (RD-A-1 /3)-Z4-A013-LV | 2027-09-21 → 2027-09-20 (-1d) | 2027-09-25 → 2027-09-21 (-4d) | -153.02d → -152d |
| RHD4CZ4A013LV5200 | Installation of Drawpit size 900x900x1000mm for Low Voltage Network - (RD-A-1 /3)-Z4-A013-LV | 2027-09-25 → 2027-09-22 (-3d) | 2027-09-27 → 2027-09-25 (-2d) | -142.02d → -141d |

| ID | Task | Start | Finish | Complete | Total float |
| --- | --- | --- | --- | --- | --- |
| 4258 | **RHD4-02-002-A013-(LV)-Low Voltage cables** | 2027-08-24 → 2027-08-23 (-1d) | 2027-09-14 → 2027-09-12 (-2d) |  |  |
| RHD4CZ4A013LV3100 | Excavation for Low Voltage Cables for Low Voltage Network - (RD-A-1 /3)-Z4-A013-LV | 2027-08-24 → 2027-08-23 (-1d) | 2027-08-30 → 2027-08-28 (-2d) |  | -153.02d → -152d |
| RHD4CZ4A013LV3200 | Cable Laying of Low Voltage Cables for Low Voltage Network - (RD-A-1 /3)-Z4-A013-LV | 2027-08-30 → 2027-08-29 (-1d) | 2027-09-05 → 2027-09-02 (-3d) |  | -153.02d → -152d |
| RHD4CZ4A013LV3300 | Warning tape and Backfill for Low Voltage Cables for Low Voltage Network - (RD-A-1 /3)-Z4-A013-LV | 2027-09-05 → 2027-09-04 (-1d) | 2027-09-11 → 2027-09-08 (-3d) |  | -153.02d → -152d |
| RHD4CZ4A013LV3400 | Testing of Low Voltage Cables for Low Voltage Network - (RD-A-1 /3)-Z4-A013-LV | 2027-09-11 → 2027-09-09 (-2d) | 2027-09-14 → 2027-09-12 (-2d) |  | -153.02d → -152d |
| 4259 | **RHD4-02-002-A013-(LV)-Low Voltage Distribution Pillars** | 2027-09-14 → 2027-09-13 (-1d) | 2027-09-21 → 2027-09-19 (-2d) |  |  |
| RHD4CZ4A013LV4100 | Leveling for Distribution Pillars for Low Voltage Network - (RD-A-1 /3)-Z4-A013-LV | 2027-09-14 → 2027-09-13 (-1d) | 2027-09-16 → 2027-09-14 (-2d) |  | -153.02d → -152d |
| RHD4CZ4A013LV4200 | Lean Concrete for Distribution Pillars for Low Voltage Network - (RD-A-1 /3)-Z4-A013-LV | 2027-09-16 → 2027-09-15 (-1d) | 2027-09-19 → 2027-09-16 (-3d) |  | -153.02d → -152d |
| RHD4CZ4A013LV4300 | Installation of Distribution Pillars for Low Voltage Network - (RD-A-1 /3)-Z4-A013-LV | 2027-09-19 → 2027-09-18 (-1d) | 2027-09-21 → 2027-09-19 (-2d) |  | -153.02d → -152d |
| 3126 | **RHD4-02-002-Z4-A013-Street Lighting Network - SL** | 2027-04-06 → 2027-03-24 (-13d) | 2027-06-08 → 2027-05-25 (-14d) |  |  |
| 3127 | **RHD4-02-002-A013-(SL)-Street Lighting duct banks** | 2027-04-06 → 2027-03-24 (-13d) | 2027-04-20 → 2027-04-06 (-14d) |  |  |
| RHD4CZ4A013SL2100 | Excavation of Duct Banks for Street Lighting Network - (RD-A-1 /3)-Z4-A013-SL | 2027-04-06 → 2027-03-24 (-13d) | 2027-04-10 → 2027-03-27 (-14d) |  | -121.02d → -110d |
| RHD4CZ4A013SL2200 | Installation of Duct Banks for Street Lighting Network - (RD-A-1 /3)-Z4-A013-SL | 2027-04-10 → 2027-03-28 (-13d) | 2027-04-14 → 2027-03-31 (-14d) |  | -121.02d → -109d |
| RHD4CZ4A013SL2300 | Pouring of Duct Banks for Street Lighting Network - (RD-A-1 /3)-Z4-A013-SL | 2027-04-14 → 2027-04-01 (-13d) | 2027-04-18 → 2027-04-04 (-14d) |  | -121.02d → -109d |
| RHD4CZ4A013SL2400 | Backfilling of Duct Banks for Street Lighting Network - (RD-A-1 /3)-Z4-A013-SL | 2027-04-18 → 2027-04-05 (-13d) | 2027-04-20 → 2027-04-06 (-14d) |  | -121.02d → -109d |
| 3129 | **RHD4-02-002-A013-(SL)-Street Lighting cables** | 2027-05-08 → 2027-04-25 (-13d) | 2027-06-08 → 2027-05-25 (-14d) |  |  |
| RHD4CZ4A013SL3100 | Excavation for Street Lighting Cables for Street Lighting Network - (RD-A-1 /3)-Z4-A013-SL | 2027-05-08 → 2027-04-25 (-13d) | 2027-05-20 → 2027-05-02 (-18d) |  | -122.02d → -111d |
| RHD4CZ4A013SL3200 | Cable Laying of Street Lighting Cables for Street Lighting Network - (RD-A-1 /3)-Z4-A013-SL | 2027-05-20 → 2027-05-03 (-17d) | 2027-05-27 → 2027-05-09 (-18d) |  | -122.02d → -111d |
| RHD4CZ4A013SL3300 | Warning tape and Backfill for Street Lighting Cables for Street Lighting Network - (RD-A-1 /3)-Z4-A013-SL | 2027-05-27 → 2027-05-10 (-17d) | 2027-06-03 → 2027-05-20 (-14d) |  | -122.02d → -111d |
| RHD4CZ4A013SL3400 | Testing of Street Lighting Cables for Street Lighting Network - (RD-A-1 /3)-Z4-A013-SL | 2027-06-03 → 2027-05-22 (-12d) | 2027-06-08 → 2027-05-25 (-14d) |  | -109.02d → -98d |
| 3130 | **RHD4-02-002-A013-(SL)-Street Lighting Poles** | 2027-04-20 → 2027-04-07 (-13d) | 2027-05-26 → 2027-05-08 (-18d) |  |  |
| RHD4CZ4A013SL1100 | Excavation for RC Base for Lighting Poles for Street Lighting Network - (RD-A-1 /3)-Z4-A013-SL | 2027-04-20 → 2027-04-07 (-13d) | 2027-04-25 → 2027-04-11 (-14d) |  | -121.02d → -109d |
| RHD4CZ4A013SL1200 | Installation for RC Base for Lighting Poles for Street Lighting Network - (RD-A-1 /3)-Z4-A013-SL | 2027-04-25 → 2027-04-12 (-13d) | 2027-04-29 → 2027-04-15 (-14d) |  | -118.02d → -107d |
| RHD4CZ4A013SL1300 | Backfill for RC Base for Lighting Poles for Street Lighting Network - (RD-A-1 /3)-Z4-A013-SL | 2027-04-29 → 2027-04-17 (-12d) | 2027-05-04 → 2027-04-20 (-14d) |  | -118.02d → -107d |
| RHD4CZ4A013SL1400 | Installation for Lighting Poles for Street Lighting Network - (RD-A-1 /3)-Z4-A013-SL | 2027-05-04 → 2027-04-21 (-13d) | 2027-05-11 → 2027-04-27 (-14d) |  | -115.02d → -104d |
| RHD4CZ4A013SL1500 | Luminaire Installation for Lighting Poles for Street Lighting Network - (RD-A-1 /3)-Z4-A013-SL | 2027-05-13 → 2027-05-01 (-12d) | 2027-05-26 → 2027-05-08 (-18d) |  | -115.02d → -104d |
| 3132 | **RHD4-02-002-A013-(SL)-Street Lighting Earthing System** | 2027-05-11 → 2027-04-28 (-13d) | 2027-05-13 → 2027-04-29 (-14d) |  |  |
| RHD4CZ4A013SL6100 | Installation of Earthing for Lighting Poles and Fedder Pillers for Street Lighting Network - (RD-A-1 /3)-Z4-A013-SL | 2027-05-11 → 2027-04-28 (-13d) | 2027-05-13 → 2027-04-29 (-14d) |  | -115.02d → -104d |
| 3128 | **RHD4-02-002-A013-(SL)-Street Lighting Drawpit** | 2027-04-25 → 2027-04-12 (-13d) | 2027-04-29 → 2027-04-15 (-14d) |  |  |
| RHD4CZ4A013SL5100 | Excavation of Drawpit size 600x600x900mm for Street Lighting Network - (RD-A-1 /3)-Z4-A013-SL | 2027-04-25 → 2027-04-12 (-13d) | 2027-04-27 → 2027-04-13 (-14d) |  | -121.02d → -109d |
| RHD4CZ4A013SL5200 | Installation of Drawpit size 600x600x900mm for Street Lighting Network - (RD-A-1 /3)-Z4-A013-SL | 2027-04-27 → 2027-04-14 (-13d) | 2027-04-29 → 2027-04-15 (-14d) |  | -121.02d → -109d |
| 3138 | **RHD4-02-002-Z4-A013-Telecommunications Network - TC** | 2027-05-04 → 2027-04-21 (-13d) | 2027-06-15 → 2027-06-01 (-14d) |  |  |
| 3139 | **RHD4-02-002-A013-(TC)-Telecommunications Ducts** | 2027-05-04 → 2027-04-21 (-13d) | 2027-06-15 → 2027-06-01 (-14d) |  |  |
| RHD4CZ4A013TC2100 | Excavation of HDPE Ducts for Telecom Network - (RD-A-1 /3)-Z4-A013-TC | 2027-05-04 → 2027-04-21 (-13d) | 2027-05-19 → 2027-05-01 (-18d) |  | -118.02d → -107d |
| RHD4CZ4A013TC2200 | Installation of HDPE Ducts for Telecom Network - (RD-A-1 /3)-Z4-A013-TC | 2027-05-19 → 2027-05-02 (-17d) | 2027-06-05 → 2027-05-22 (-14d) |  | -118.02d → -107d |
| RHD4CZ4A013TC2400 | Backfilling of HDPE Ducts for Telecom Network - (RD-A-1 /3)-Z4-A013-TC | 2027-06-05 → 2027-05-23 (-13d) | 2027-06-15 → 2027-06-01 (-14d) |  | -118.02d → -107d |
| 3140 | **RHD4-02-002-A013-(TC)-Telecommunications Manholes** | 2027-05-19 → 2027-05-02 (-17d) | 2027-05-26 → 2027-05-08 (-18d) |  |  |
| RHD4CZ4A013TC5100 | Excavation for Manholes for Telecom Network - (RD-A-1 /3)-Z4-A013-TC | 2027-05-19 → 2027-05-02 (-17d) | 2027-05-23 → 2027-05-04 (-19d) |  | -110.02d → -99d |
| RHD4CZ4A013TC5200 | Installation of Manholes for Telecom Network - (RD-A-1 /3)-Z4-A013-TC | 2027-05-23 → 2027-05-05 (-18d) | 2027-05-26 → 2027-05-08 (-18d) |  | -110.02d → -99d |
| 3142 | **RHD4-02-002-Z4-A013-Information and Communication Technologies - ICT** | 2027-04-10 → 2027-03-28 (-13d) | 2027-07-29 → 2027-07-15 (-14d) |  |  |
| 3143 | **RHD4-02-002-A013-(ICT)-Information and Communication Technologies Ducts** | 2027-06-03 → 2027-05-22 (-12d) | 2027-07-29 → 2027-07-15 (-14d) |  |  |
| RHD4CZ4A013ICT2100 | Excavation of HDPE Ducts for ICT Network - (RD-A-1 /3)-Z4-A013-ICT | 2027-06-03 → 2027-05-22 (-12d) | 2027-06-23 → 2027-06-09 (-14d) |  | -122.02d → -111d |
| RHD4CZ4A013ICT2200 | Installation of HDPE Ducts for ICT Network - (RD-A-1 /3)-Z4-A013-ICT | 2027-06-23 → 2027-06-10 (-13d) | 2027-07-06 → 2027-06-22 (-14d) |  | -119.02d → -108d |
| RHD4CZ4A013ICT2400 | Backfilling of HDPE Ducts for ICT Network - (RD-A-1 /3)-Z4-A013-ICT | 2027-07-10 → 2027-06-27 (-13d) | 2027-07-29 → 2027-07-15 (-14d) |  | -122.02d → -111d |
| 3144 | **RHD4-02-002-A013-(ICT)-Information and Communication Technologies Manholes** | 2027-06-23 → 2027-06-10 (-13d) | 2027-07-10 → 2027-06-26 (-14d) |  |  |
| RHD4CZ4A013ICT5100 | Excavation for Manholes for ICT Network - (RD-A-1 /3)-Z4-A013-ICT | 2027-06-23 → 2027-06-10 (-13d) | 2027-07-01 → 2027-06-17 (-14d) |  | -122.02d → -111d |
| RHD4CZ4A013ICT5200 | Installation of Manholes for ICT Network - (RD-A-1 /3)-Z4-A013-ICT | 2027-07-01 → 2027-06-19 (-12d) | 2027-07-10 → 2027-06-26 (-14d) |  | -122.02d → -111d |
| 5415 | **RHD4-02-002-A013-(ICT)-Information and Communication Technologies Road Crossings** | 2027-04-10 → 2027-03-28 (-13d) | 2027-05-05 → 2027-04-21 (-14d) |  |  |
| RHD4CZ4A013ICT3100 | Excavation for Road Crossings for ICT Network - (RD-A-1 /3)-Z4-A013-ICT | 2027-04-10 → 2027-03-28 (-13d) | 2027-04-15 → 2027-04-01 (-14d) |  | -121.02d → -110d |
| RHD4CZ4A013ICT3200 | Installation of Road Crossings for ICT Network - (RD-A-1 /3)-Z4-A013-ICT | 2027-04-15 → 2027-04-03 (-12d) | 2027-04-22 → 2027-04-08 (-14d) |  | -121.02d → -110d |
| RHD4CZ4A013ICT3300 | Pouring of Road Crossings for ICT Network - (RD-A-1 /3)-Z4-A013-ICT | 2027-04-22 → 2027-04-10 (-12d) | 2027-04-29 → 2027-04-15 (-14d) |  | -121.02d → -110d |
| RHD4CZ4A013ICT3400 | Backfilling of Road Crossings for ICT Network - (RD-A-1 /3)-Z4-A013-ICT | 2027-04-29 → 2027-04-17 (-12d) | 2027-05-05 → 2027-04-21 (-14d) |  | -121.02d → -110d |
| 3163 | **RHD4-02-002-Z4-RA02** |  | 2027-07-24 → 2027-07-11 (-13d) |  |  |
| 3342 | **RHD4-02-002-Z4-RA02-Road Works - RD** |  | 2027-07-24 → 2027-07-11 (-13d) |  |  |
| 3344 | **RHD4-02-002-RA02-(RD)-Aggregate Base Course** | 2027-02-14 → 2026-11-10 (-96d) | 2027-02-20 → 2026-11-12 (-100d) |  |  |
| RHD4CZ4RA02RD2100 | Supply, lay and compaction Aggregate base course compacted thickness 300 mmfor Roads - (ROUND-02)-Z4-RA02-RD | 2027-02-14 → 2026-11-10 A (-96d) | 2027-02-20 → 2026-11-12 A (-100d) | 0% → 100% | -157.02d → none |
| 3345 | **RHD4-02-002-RA02-(RD)-Bituminous base course Two Layers, including (MC1)&(RC2)** | 2027-02-20 → 2026-11-10 (-102d) | 2027-06-17 → 2027-06-05 (-12d) |  |  |
| RHD4CZ4RA02RD3100 | Supply, lay and Asphaltic base course including Prime Coat (MC1) for 1st Layer - (ROUND-02)-Z4-RA02-RD | 2027-02-20 → 2026-11-10 A (-102d) | 2027-02-24 → 2026-11-12 A (-104d) | 0% → 100% | -155.02d → none |
| RHD4CZ4RA02RD3200 | Supply, lay and Asphaltic base course including Tack Coat (RC2) for 2nd Layer - (ROUND-02)-Z4-RA02-RD | 2027-06-14 → 2027-06-01 (-13d) | 2027-06-17 → 2027-06-05 (-12d) |  | -113.06d → -102.05d |
| 3347 | **RHD4-02-002-RA02-(RD)-Precast Concrete Curb** | 2027-06-17 → 2027-06-05 (-12d) | 2027-06-24 → 2027-06-12 (-12d) |  |  |
| RHD4CZ4RA02RD5100 | Supply and installation Precast Concrete Kerb for Roads - (ROUND-02)-Z4-RA02-RD | 2027-06-17 → 2027-06-05 (-12d) | 2027-06-24 → 2027-06-12 (-12d) |  | -112.06d → -101.05d |
| 3350 | **RHD4-02-002-RA02-(RD)-Traffic Signage** | 2027-06-24 → 2027-06-12 (-12d) | 2027-07-06 → 2027-06-23 (-13d) |  |  |
| RHD4CZ4RA02RD8100 | Installation of Traffic Signage for Road Network - (ROUND-02)-Z4-RA02-RD | 2027-06-24 → 2027-06-12 (-12d) | 2027-07-06 → 2027-06-23 (-13d) |  | -93.06d → -82.05d |
| 3346 | **RHD4-02-002-RA02-(RD)-Bituminous concrete wearing course including tack coat (RC2)** | 2027-06-24 → 2027-06-12 (-12d) | 2027-06-27 → 2027-06-14 (-13d) |  |  |
| RHD4CZ4RA02RD4100 | Supply, lay and compaction Asphaltic wearing course including tack Coat (RC2)for Road Network - (ROUND-02)-Z4-RA02-RD | 2027-06-24 → 2027-06-12 (-12d) | 2027-06-27 → 2027-06-14 (-13d) |  | -112.06d → -101.05d |
| 3349 | **RHD4-02-002-RA02-(RD)-Pavement Marking** | 2027-06-27 → 2027-06-14 (-13d) | 2027-07-24 → 2027-07-11 (-13d) |  |  |
| RHD4CZ4RA02RD7100 | Pavement Markings for Road Network - (ROUND-02)-Z4-RA02-RD | 2027-06-27 → 2027-06-14 (-13d) | 2027-07-06 → 2027-06-23 (-13d) |  | -112.06d → -101.05d |
| RHD4CZ4RA02RD9100 | Installation for Speed Bump for Road Network - (ROUND-02)-Z4-RA02-RD | 2027-07-06 → 2027-06-23 (-13d) | 2027-07-24 → 2027-07-11 (-13d) |  | -93.06d → -82.05d |
| 3315 | **RHD4-02-002-Z4-RA02-Street Lighting Network - SL** | 2027-04-10 → 2027-03-28 (-13d) | 2027-05-19 → 2027-05-01 (-18d) |  |  |
| 3316 | **RHD4-02-002-RA02-(SL)-Street Lighting duct banks** | 2027-04-10 → 2027-03-28 (-13d) | 2027-04-24 → 2027-04-10 (-14d) |  |  |

| ID | Task | Start | Finish | Complete | Total float |
| --- | --- | --- | --- | --- | --- |
| RHD4CZ4RA02SL2100 | Excavation of Duct Banks for Street Lighting Network - (ROUND-02)-Z4-RA02-SL | 2027-04-10 → 2027-03-28 (-13d) | 2027-04-13 → 2027-03-30 (-14d) |  | -121.02d → -110d |
| RHD4CZ4RA02SL2200 | Installation of Duct Banks for Street Lighting Network - (ROUND-02)-Z4-RA02-SL | 2027-04-13 → 2027-03-31 (-13d) | 2027-04-18 → 2027-04-04 (-14d) |  | -121.02d → -110d |
| RHD4CZ4RA02SL2300 | Pouring of Duct Banks for Street Lighting Network - (ROUND-02)-Z4-RA02-SL | 2027-04-18 → 2027-04-05 (-13d) | 2027-04-21 → 2027-04-07 (-14d) |  | -121.02d → -110d |
| RHD4CZ4RA02SL2400 | Backfilling of Duct Banks for Street Lighting Network - (ROUND-02)-Z4-RA02-SL | 2027-04-21 → 2027-04-08 (-13d) | 2027-04-24 → 2027-04-10 (-14d) |  | -121.02d → -110d |
| 3318 | **RHD4-02-002-RA02-(SL)-Street Lighting cables** | 2027-04-13 → 2027-03-31 (-13d) | 2027-04-22 → 2027-04-08 (-14d) |  |  |
| RHD4CZ4RA02SL3100 | Excavation for Street Lighting Cables for Street Lighting Network - (ROUND-02)-Z4-RA02-SL | 2027-04-13 → 2027-03-31 (-13d) | 2027-04-15 → 2027-04-01 (-14d) |  | -114.02d → -103d |
| RHD4CZ4RA02SL3200 | Cable Laying of Street Lighting Cables for Street Lighting Network - (ROUND-02)-Z4-RA02-SL | 2027-04-15 → 2027-04-03 (-12d) | 2027-04-18 → 2027-04-04 (-14d) |  | -114.02d → -103d |
| RHD4CZ4RA02SL3300 | Warning tape and Backfill for Street Lighting Cables for Street Lighting Network - (ROUND-02)-Z4-RA02-SL | 2027-04-18 → 2027-04-05 (-13d) | 2027-04-20 → 2027-04-06 (-14d) |  | -114.02d → -103d |
| RHD4CZ4RA02SL3400 | Testing of Street Lighting Cables for Street Lighting Network - (ROUND-02)-Z4-RA02-SL | 2027-04-20 → 2027-04-07 (-13d) | 2027-04-22 → 2027-04-08 (-14d) |  | -114.02d → -103d |
| 3319 | **RHD4-02-002-RA02-(SL)-Street Lighting Poles** | 2027-04-24 → 2027-04-11 (-13d) | 2027-05-05 → 2027-04-21 (-14d) |  |  |
| RHD4CZ4RA02SL1100 | Excavation for RC Base for Lighting Poles for Street Lighting Network - (ROUND-02)-Z4-RA02-SL | 2027-04-24 → 2027-04-11 (-13d) | 2027-04-26 → 2027-04-12 (-14d) |  | -121.02d → -110d |
| RHD4CZ4RA02SL1200 | Installation for RC Base for Lighting Poles for Street Lighting Network - (ROUND-02)-Z4-RA02-SL | 2027-04-26 → 2027-04-13 (-13d) | 2027-04-28 → 2027-04-14 (-14d) |  | -121.02d → -110d |
| RHD4CZ4RA02SL1300 | Backfill for RC Base for Lighting Poles for Street Lighting Network - (ROUND-02)-Z4-RA02-SL | 2027-04-28 → 2027-04-15 (-13d) | 2027-05-01 → 2027-04-17 (-14d) |  | -121.02d → -110d |
| RHD4CZ4RA02SL1400 | Installation for Lighting Poles for Street Lighting Network - (ROUND-02)-Z4-RA02-SL | 2027-05-01 → 2027-04-18 (-13d) | 2027-05-03 → 2027-04-19 (-14d) |  | -121.02d → -110d |
| RHD4CZ4RA02SL1500 | Luminaire Installation for Lighting Poles for Street Lighting Network - (ROUND-02)-Z4-RA02-SL | 2027-05-03 → 2027-04-20 (-13d) | 2027-05-05 → 2027-04-21 (-14d) |  | -121.02d → -110d |
| 5023 | **RHD4-02-002-RA02-(SL)-Street Lighting Feeder Pillars** | 2027-05-05 → 2027-04-22 (-13d) | 2027-05-12 → 2027-04-28 (-14d) |  |  |
| RHD4CZ4RA02SL4100 | Leveling for Distribution Pillars for Street Lighting Network - (ROUND-02)-Z4-RA02-SL | 2027-05-05 → 2027-04-22 (-13d) | 2027-05-08 → 2027-04-24 (-14d) |  | -121.02d → -110d |
| RHD4CZ4RA02SL4200 | Lean Concrete for Distribution Pillars for Street Lighting Network - (ROUND-02)-Z4-RA02-SL | 2027-05-08 → 2027-04-25 (-13d) | 2027-05-10 → 2027-04-26 (-14d) |  | -121.02d → -110d |
| RHD4CZ4RA02SL4300 | Installation of Distribution Pillars for Street Lighting Network - (ROUND-02)-Z4-RA02-SL | 2027-05-10 → 2027-04-27 (-13d) | 2027-05-12 → 2027-04-28 (-14d) |  | -121.02d → -110d |
| 5024 | **RHD4-02-002-RA02-(SL)-Street Lighting Earthing System** | 2027-05-12 → 2027-04-29 (-13d) | 2027-05-19 → 2027-05-01 (-18d) |  |  |
| RHD4CZ4RA02SL6100 | Installation of Earthing for Lighting Poles and Fedder Pillers for Street Lighting Network - (ROUND-02)-Z4-RA02-SL | 2027-05-12 → 2027-04-29 (-13d) | 2027-05-19 → 2027-05-01 (-18d) |  | -121.02d → -110d |
| 3317 | **RHD4-02-002-RA02-(SL)-Street Lighting Drawpit** | 2027-04-21 → 2027-04-08 (-13d) | 2027-04-26 → 2027-04-12 (-14d) |  |  |
| RHD4CZ4RA02SL5100 | Excavation of Drawpit size 600x600x900mm for Street Lighting Network - (ROUND-02)-Z4-RA02-SL | 2027-04-21 → 2027-04-08 (-13d) | 2027-04-24 → 2027-04-10 (-14d) |  | -98.06d → -87.04d |
| RHD4CZ4RA02SL5200 | Installation of Drawpit size 600x600x900mm for Street Lighting Network - (ROUND-02)-Z4-RA02-SL | 2027-04-24 → 2027-04-11 (-13d) | 2027-04-26 → 2027-04-12 (-14d) |  | -98.06d → -87.04d |
| 3335 | **RHD4-02-002-Z4-RA02-Security Network - CCTV** | 2027-05-19 → 2027-05-02 (-17d) | 2027-06-14 → 2027-06-01 (-13d) |  |  |
| 3336 | **RHD4-02-002-RA02-(CCTV)-Civil Works** | 2027-05-19 → 2027-05-02 (-17d) | 2027-05-31 → 2027-05-12 (-19d) |  |  |
| RHD4CZ4RA02CCTV2100 | Civil Works for Security Network - (ROUND-02)-Z4-RA02-CCTV | 2027-05-19 → 2027-05-02 (-17d) | 2027-05-31 → 2027-05-12 (-19d) |  | -121.02d → -110d |
| 2959 | **RHD4-02-002-RA02-(CCTV)-CCTV Poles** | 2027-05-19 → 2027-05-02 (-17d) | 2027-05-31 → 2027-05-13 (-18d) |  |  |
| RHD4CZ4RA02CCTV1100 | Excavation for RC Base for CCTV Poles for Security Network - (RD-C-3/1)-Z4-C031-CCTV | 2027-05-19 → 2027-05-02 (-17d) | 2027-05-22 → 2027-05-03 (-19d) |  | -114.06d → -103.04d |
| RHD4CZ4RA02CCTV1200 | Installation for RC Base for CCTV Poles for Security Network - (RD-C-3/1)-Z4-C031-CCTV | 2027-05-22 → 2027-05-04 (-18d) | 2027-05-24 → 2027-05-05 (-19d) |  | -114.06d → -103.04d |
| RHD4CZ4RA02CCTV1300 | Backfill for RC Base for CCTV Poles for Security Network - (RD-C-3/1)-Z4-C031-CCTV | 2027-05-24 → 2027-05-06 (-18d) | 2027-05-26 → 2027-05-09 (-17d) |  | -114.06d → -103.04d |
| RHD4CZ4RA02CCTV1400 | Installation for CCTV Poles for Security Network - (RD-C-3/1)-Z4-C031-CCTV | 2027-05-26 → 2027-05-09 (-17d) | 2027-05-29 → 2027-05-11 (-18d) |  | -114.06d → -103.04d |
| RHD4CZ4RA02CCTV1500 | Protection post Installation for CCTV Poles for Security Network - (RD-C-3/1)-Z4-C031-CCTV | 2027-05-29 → 2027-05-11 (-18d) | 2027-05-31 → 2027-05-13 (-18d) |  | -114.06d → -103.04d |
| 2960 | **RHD4-02-002-RA02-(CCTV)-Camera** | 2027-05-31 → 2027-05-13 (-18d) | 2027-06-02 → 2027-05-20 (-13d) |  |  |
| RHD4CZ4RA02CCTV3100 | Installation for Cameras for Security Network - (RD-C-3/1)-Z4-C031-CCTV | 2027-05-31 → 2027-05-13 (-18d) | 2027-06-02 → 2027-05-20 (-13d) |  | -113.06d → -102.05d |
| 2961 | **RHD4-02-002-RA02-(CCTV)-Power and Infrastructure** | 2027-05-29 → 2027-05-11 (-18d) | 2027-06-02 → 2027-05-20 (-13d) |  |  |
| RHD4CZ4RA02CCTV4100 | Installation of Power outlet, UPS and midspan for PTZ Camerafor Cameras for Security Network - (RD-C-3/1)-Z4-C031-CCTV | 2027-05-29 → 2027-05-11 (-18d) | 2027-05-31 → 2027-05-13 (-18d) |  | -113.06d → -102.05d |
| RHD4CZ4RA02CCTV4200 | Short Range Wireless PoP wireless Bridgefor CCTV Poles for Security Network - (RD-C-3/1)-Z4-C031-CCTV | 2027-05-31 → 2027-05-13 (-18d) | 2027-06-02 → 2027-05-20 (-13d) |  | -113.06d → -102.05d |
| 2963 | **RHD4-02-002-RA02-(CCTV)-CCTV Panels and Components** | 2027-06-02 → 2027-05-20 (-13d) | 2027-06-14 → 2027-06-01 (-13d) |  |  |
| RHD4CZ4RA02CCTV6100 | Installation for CCTV Panels for Security Network - (RD-C-3/1)-Z4-C031-CCTV | 2027-06-02 → 2027-05-20 (-13d) | 2027-06-14 → 2027-06-01 (-13d) |  | -113.06d → -102.05d |
| 2785 | **RHD4-02-002-Z4-C031** |  | 2027-07-07 → 2027-07-04 (-3d) |  |  |
| 2964 | **RHD4-02-002-Z4-C031-Road Works - RD** |  | 2027-07-05 → 2027-07-01 (-4d) |  |  |
| 2966 | **RHD4-02-002-C031-(RD)-Aggregate Base Course** | 2027-02-21 → 2026-11-10 (-103d) | 2027-02-23 → 2026-11-11 (-104d) |  |  |
| RHD4CZ4C031RD2100 | Supply, lay and compaction Aggregate base course compacted thickness 300 mmfor Roads - (RD-C-3/1)-Z4-C031-RD | 2027-02-21 → 2026-11-10 A (-103d) | 2027-02-23 → 2026-11-11 A (-104d) | 0% → 100% | -154d → none |
| 2967 | **RHD4-02-002-C031-(RD)-Bituminous base course Two Layers, including (MC1)&(RC2)** | 2027-02-24 → 2027-02-17 (-7d) | 2027-06-22 → 2027-06-19 (-3d) |  |  |
| RHD4CZ4C031RD3100 | Supply, lay and Asphaltic base course including Prime Coat (MC1) for 1st Layer - (RD-C-3/1)-Z4-C031-RD | 2027-02-24 → 2027-02-17 (-7d) | 2027-02-25 → 2027-02-18 (-7d) |  | -154d → -149d |
| RHD4CZ4C031RD3200 | Supply, lay and Asphaltic base course including Tack Coat (RC2) for 2nd Layer - (RD-C-3/1)-Z4-C031-RD | 2027-06-20 → 2027-06-17 (-3d) | 2027-06-22 → 2027-06-19 (-3d) |  | -115.02d → -113d |
| 2969 | **RHD4-02-002-C031-(RD)-Precast Concrete Curb** | 2027-06-22 → 2027-06-20 (-2d) | 2027-06-27 → 2027-06-23 (-4d) |  |  |
| RHD4CZ4C031RD5100 | Supply and installation Precast Concrete Kerb for Roads - (RD-C-3/1)-Z4-C031-RD | 2027-06-22 → 2027-06-20 (-2d) | 2027-06-27 → 2027-06-23 (-4d) |  | -115.02d → -113d |
| 2972 | **RHD4-02-002-C031-(RD)-Traffic Signage** | 2027-06-27 → 2027-06-24 (-3d) | 2027-07-04 → 2027-06-30 (-4d) |  |  |
| RHD4CZ4C031RD8100 | Installation of Traffic Signage for Road Network - (RD-C-3/1)-Z4-C031-RD | 2027-06-27 → 2027-06-24 (-3d) | 2027-07-04 → 2027-06-30 (-4d) |  | -115.02d → -113d |
| 2968 | **RHD4-02-002-C031-(RD)-Bituminous concrete wearing course including tack coat (RC2)** | 2027-06-27 → 2027-06-24 (-3d) | 2027-06-29 → 2027-06-26 (-3d) |  |  |
| RHD4CZ4C031RD4100 | Supply, lay and compaction Asphaltic wearing course including tack Coat (RC2)for Road Network - (RD-C-3/1)-Z4-C031-RD | 2027-06-27 → 2027-06-24 (-3d) | 2027-06-29 → 2027-06-26 (-3d) |  | -114.02d → -112d |
| 2971 | **RHD4-02-002-C031-(RD)-Pavement Marking** | 2027-06-29 → 2027-06-27 (-2d) | 2027-07-05 → 2027-07-01 (-4d) |  |  |
| RHD4CZ4C031RD7100 | Pavement Markings for Road Network - (RD-C-3/1)-Z4-C031-RD | 2027-06-29 → 2027-06-27 (-2d) | 2027-07-05 → 2027-07-01 (-4d) |  | -114.02d → -112d |
| 2789 | **RHD4-02-002-Z4-C031-Storm Network - ST** |  | 2027-04-25 → 2027-04-21 (-4d) |  |  |
| 2430 | **RHD4-02-002-C031-(ST)-MH Works - 2000 mm diameter** |  | 2027-02-18 → 2027-02-16 (-2d) |  |  |
| RHD4CZ4C031ST3202 | Installation of Base for MH 2000 mm - (RD-C-3/1)-Z4-C031-ST |  | 2027-02-11 → 2027-02-09 (-2d) |  | -190.02d → -189d |
| RHD4CZ4C031ST3302 | MH Ring and C.Slab works and Backfilling works for MH 2000 mm - (RD-C-3/1)-Z4-C031-ST | 2027-02-11 → 2027-02-10 (-1d) | 2027-02-14 → 2027-02-11 (-3d) |  | -190.02d → -189d |
| RHD4CZ4C031ST3402 | Steel Cover for MH 2000 mm - (RD-C-3/1)-Z4-C031-ST | 2027-02-14 → 2027-02-13 (-1d) | 2027-02-16 → 2027-02-14 (-2d) |  | -190.02d → -189d |
| RHD4CZ4C031ST3502 | Finishing, Benching, Testing works for MH 2000 mm - (RD-C-3/1)-Z4-C031-ST | 2027-02-16 → 2027-02-15 (-1d) | 2027-02-18 → 2027-02-16 (-2d) |  | -190.02d → -189d |
| 2427 | **RHD4-02-002-C031-(ST)-UPVC Pipes - 400 mm diameter** |  | 2027-02-28 → 2027-02-24 (-4d) |  |  |
| RHD4CZ4C031ST2301 | Installing for UPVC Pipe Line 400 mm - (RD-C-3/1)-Z4-C031-ST | 2027-02-20 → 2027-02-17 (-3d) | 2027-02-23 → 2027-02-18 (-5d) |  | -195.02d → -193d |
| RHD4CZ4C031ST2401 | Primary Test for UPVC Pipe Line 400 mm - (RD-C-3/1)-Z4-C031-ST | 2027-02-23 → 2027-02-20 (-3d) | 2027-02-25 → 2027-02-21 (-4d) |  | -195.02d → -193d |
| RHD4CZ4C031ST2501 | Backfilling and warning tape works for UPVC Pipe Line 400 mm - (RD-C-3/1)-Z4-C031-ST | 2027-02-25 → 2027-02-23 (-2d) | 2027-02-28 → 2027-02-24 (-4d) |  | -195.02d → -193d |
| 2420 | **RHD4-02-002-C031-(ST)-GRP Pipes - 1200 mm diameter** | 2027-02-20 → 2027-02-17 (-3d) | 2027-03-04 → 2027-03-01 (-3d) |  |  |
| RHD4CZ4C031ST1108 | Excavation works for GRP Pipe Line 1200 mm - (RD-C-3/1)-Z4-C031-ST | 2027-02-20 → 2027-02-17 (-3d) | 2027-02-23 → 2027-02-18 (-5d) |  | -197.02d → -195d |
| RHD4CZ4C031ST1208 | Bedding works for GRP Pipe Line 1200 mm - (RD-C-3/1)-Z4-C031-ST | 2027-02-23 → 2027-02-20 (-3d) | 2027-02-25 → 2027-02-21 (-4d) |  | -197.02d → -195d |
| RHD4CZ4C031ST1308 | Installing for GRP Pipe Line 1200 mm - (RD-C-3/1)-Z4-C031-ST | 2027-02-25 → 2027-02-23 (-2d) | 2027-02-28 → 2027-02-24 (-4d) |  | -197.02d → -195d |
| RHD4CZ4C031ST1408 | Primary Test for GRP Pipe Line 1200 mm - (RD-C-3/1)-Z4-C031-ST | 2027-02-28 → 2027-02-25 (-3d) | 2027-03-02 → 2027-02-27 (-3d) |  | -197.02d → -195d |

| ID | Task | Start | Finish | Complete | Total float |
| --- | --- | --- | --- | --- | --- |
| RHD4CZ4C031ST1508 | Backfilling and warning tape works for GRP Pipe Line 1200 mm - (RD-C-3/1)-Z4-C031-ST | 2027-03-02 → 2027-02-28 (-2d) | 2027-03-04 → 2027-03-01 (-3d) |  | -197.02d → -195d |
| 2415 | **RHD4-02-002-C031-(ST)-GRP Pipes - 700 mm diameter** |  | 2027-02-25 → 2027-02-21 (-4d) |  |  |
| RHD4CZ4C031ST1403 | Primary Test for GRP Pipe Line 700 mm - (RD-C-3/1)-Z4-C031-ST | 2027-02-23 → 2027-02-20 (-3d) | 2027-02-25 → 2027-02-21 (-4d) |  | -191.02d → -189d |
| 2414 | **RHD4-02-002-C031-(ST)-GRP Pipes - 600 mm diameter** |  | 2027-03-13 → 2027-03-06 (-7d) |  |  |
| RHD4CZ4C031ST1502 | Backfilling and warning tape works for GRP Pipe Line 600 mm - (RD-C-3/1)-Z4-C031-ST |  | 2027-03-13 → 2027-03-06 (-7d) | 0% → 50% | -197.02d → -195d |
| RHD4CZ4C031ST1402 | Primary Test for GRP Pipe Line 600 mm - (RD-C-3/1)-Z4-C031-ST | 2027-03-04 → 2027-03-02 (-2d) | 2027-03-07 → 2027-03-03 (-4d) |  | -197.02d → -195d |
| 2413 | **RHD4-02-002-C031-(ST)-GRP Pipes - 500 mm diameter** |  | 2027-03-17 → 2027-03-14 (-3d) |  |  |
| RHD4CZ4C031ST1101 | Excavation works for GRP Pipe Line 500 mm - (RD-C-3/1)-Z4-C031-ST |  | 2027-03-13 → 2026-09-07 A (-187d) | 65% → 100% | -197.02d → none |
| RHD4CZ4C031ST1201 | Bedding works for GRP Pipe Line 500 mm - (RD-C-3/1)-Z4-C031-ST |  | 2027-03-13 → 2026-09-09 A (-185d) | 75% → 100% | -197.02d → none |
| RHD4CZ4C031ST1301 | Installing for GRP Pipe Line 500 mm - (RD-C-3/1)-Z4-C031-ST |  | 2027-03-13 → 2027-03-07 (-6d) |  | -197.02d → -195d |
| RHD4CZ4C031ST1501 | Backfilling and warning tape works for GRP Pipe Line 500 mm - (RD-C-3/1)-Z4-C031-ST |  | 2027-03-17 → 2027-03-14 (-3d) |  | -197.02d → -195d |
| RHD4CZ4C031ST1401 | Primary Test for GRP Pipe Line 500 mm - (RD-C-3/1)-Z4-C031-ST | 2027-03-13 → 2027-03-07 (-6d) | 2027-03-15 → 2027-03-08 (-7d) |  | -197.02d → -195d |
| 2806 | **RHD4-02-002-C031-(ST)-MH Works - 1200 mm diameter** |  | 2027-04-13 → 2027-04-10 (-3d) |  |  |
| RHD4CZ4C031ST3100 | Excavation and PC Blinding works for MH 1200 mm - (RD-C-3/1)-Z4-C031-ST |  | 2027-03-21 → 2027-03-17 (-4d) |  | -197.02d → -195d |
| RHD4CZ4C031ST3200 | Installation of Base for MH 1200 mm - (RD-C-3/1)-Z4-C031-ST |  | 2027-03-24 → 2027-03-21 (-3d) |  | -170.02d → -168d |
| RHD4CZ4C031ST3300 | MH Ring and C.Slab works and Backfilling works for MH 1200 mm - (RD-C-3/1)-Z4-C031-ST |  | 2027-03-28 → 2027-03-24 (-4d) | 16% → 21% | -170.02d → -168d |
| RHD4CZ4C031ST3400 | Steel Cover for MH 1200 mm - (RD-C-3/1)-Z4-C031-ST | 2027-03-28 → 2027-03-25 (-3d) | 2027-04-05 → 2027-04-01 (-4d) |  | -133.02d → -131d |
| RHD4CZ4C031ST3500 | Finishing, Benching, Testing works for MH 1200 mm - (RD-C-3/1)-Z4-C031-ST | 2027-04-05 → 2027-04-03 (-2d) | 2027-04-13 → 2027-04-10 (-3d) |  | -133.02d → -131d |
| 2807 | **RHD4-02-002-C031-(ST)-MH Works - 1500 mm diameter** |  | 2027-04-25 → 2027-04-21 (-4d) |  |  |
| RHD4CZ4C031ST3101 | Excavation and PC Blinding works for MH 1500 mm - (RD-C-3/1)-Z4-C031-ST |  | 2027-03-30 → 2027-03-27 (-3d) |  | -170.02d → -168d |
| RHD4CZ4C031ST3201 | Installation of Base for MH 1500 mm - (RD-C-3/1)-Z4-C031-ST |  | 2027-04-01 → 2027-03-29 (-3d) |  | -170.02d → -168d |
| RHD4CZ4C031ST3301 | MH Ring and C.Slab works and Backfilling works for MH 1500 mm - (RD-C-3/1)-Z4-C031-ST | 2027-04-01 → 2027-03-30 (-2d) | 2027-04-04 → 2027-03-31 (-4d) |  | -170.02d → -168d |
| RHD4CZ4C031ST3401 | Steel Cover for MH 1500 mm - (RD-C-3/1)-Z4-C031-ST | 2027-04-20 → 2027-04-18 (-2d) | 2027-04-22 → 2027-04-19 (-3d) |  | -148.02d → -146d |
| RHD4CZ4C031ST3501 | Finishing, Benching, Testing works for MH 1500 mm - (RD-C-3/1)-Z4-C031-ST | 2027-04-22 → 2027-04-20 (-2d) | 2027-04-25 → 2027-04-21 (-4d) |  | -148.02d → -146d |
| 2795 | **RHD4-02-002-C031-(ST)-GRP Pipes - 900 mm diameter** | 2027-04-04 → 2027-04-01 (-3d) | 2027-04-15 → 2027-04-12 (-3d) |  |  |
| RHD4CZ4C031ST1105 | Excavation works for GRP Pipe Line 900 mm - (RD-C-3/1)-Z4-C031-ST | 2027-04-04 → 2027-04-01 (-3d) | 2027-04-06 → 2027-04-03 (-3d) |  | -169.02d → -167d |
| RHD4CZ4C031ST1205 | Bedding works for GRP Pipe Line 900 mm - (RD-C-3/1)-Z4-C031-ST | 2027-04-06 → 2027-04-04 (-2d) | 2027-04-08 → 2027-04-05 (-3d) |  | -169.02d → -167d |
| RHD4CZ4C031ST1305 | Installing for GRP Pipe Line 900 mm - (RD-C-3/1)-Z4-C031-ST | 2027-04-08 → 2027-04-06 (-2d) | 2027-04-11 → 2027-04-07 (-4d) |  | -169.02d → -167d |
| RHD4CZ4C031ST1405 | Primary Test for GRP Pipe Line 900 mm - (RD-C-3/1)-Z4-C031-ST | 2027-04-11 → 2027-04-08 (-3d) | 2027-04-13 → 2027-04-10 (-3d) |  | -168.02d → -166d |
| RHD4CZ4C031ST1505 | Backfilling and warning tape works for GRP Pipe Line 900 mm - (RD-C-3/1)-Z4-C031-ST | 2027-04-13 → 2027-04-11 (-2d) | 2027-04-15 → 2027-04-12 (-3d) |  | -167.02d → -165d |
| 2790 | **RHD4-02-002-C031-(ST)-GRP Pipes - 400 mm diameter** |  | 2027-04-20 → 2027-04-17 (-3d) |  |  |
| RHD4CZ4C031ST1100 | Excavation works for GRP Pipe Line 400 mm - (RD-C-3/1)-Z4-C031-ST |  | 2027-04-08 → 2027-04-05 (-3d) |  | -168.02d → -166d |
| RHD4CZ4C031ST1200 | Bedding works for GRP Pipe Line 400 mm - (RD-C-3/1)-Z4-C031-ST |  | 2027-04-10 → 2027-04-06 (-4d) |  | -168.02d → -166d |
| RHD4CZ4C031ST1300 | Installing for GRP Pipe Line 400 mm - (RD-C-3/1)-Z4-C031-ST |  | 2027-04-14 → 2027-04-11 (-3d) |  | -169.02d → -167d |
| RHD4CZ4C031ST1500 | Backfilling and warning tape works for GRP Pipe Line 400 mm - (RD-C-3/1)-Z4-C031-ST |  | 2027-04-20 → 2027-04-17 (-3d) |  | -169.02d → -167d |
| RHD4CZ4C031ST1400 | Primary Test for GRP Pipe Line 400 mm - (RD-C-3/1)-Z4-C031-ST | 2027-04-14 → 2027-04-12 (-2d) | 2027-04-18 → 2027-04-14 (-4d) |  | -169.02d → -167d |
| 2804 | **RHD4-02-002-C031-(ST)-UPVC Pipes - 300 mm diameter** |  | 2027-04-21 → 2027-04-18 (-3d) |  |  |
| RHD4CZ4C031ST2100 | Excavation works for UPVC Pipe Line 300 mm - (RD-C-3/1)-Z4-C031-ST |  | 2027-04-10 → 2027-04-06 (-4d) |  | -168.02d → -166d |
| RHD4CZ4C031ST2200 | Bedding works for UPVC Pipe Line 300 mm - (RD-C-3/1)-Z4-C031-ST |  | 2027-04-12 → 2027-04-08 (-4d) |  | -168.02d → -166d |
| RHD4CZ4C031ST2300 | Installing for UPVC Pipe Line 300 mm - (RD-C-3/1)-Z4-C031-ST |  | 2027-04-17 → 2027-04-13 (-4d) |  | -170.02d → -168d |
| RHD4CZ4C031ST2500 | Backfilling and warning tape works for UPVC Pipe Line 300 mm - (RD-C-3/1)-Z4-C031-ST |  | 2027-04-21 → 2027-04-18 (-3d) |  | -170.02d → -168d |
| RHD4CZ4C031ST2400 | Primary Test for UPVC Pipe Line 300 mm - (RD-C-3/1)-Z4-C031-ST | 2027-04-17 → 2027-04-14 (-3d) | 2027-04-19 → 2027-04-15 (-4d) |  | -170.02d → -168d |
| 2812 | **RHD4-02-002-C031-(ST)-Concrete Encasement** | 2027-04-14 → 2027-04-12 (-2d) | 2027-04-19 → 2027-04-15 (-4d) |  |  |
| RHD4CZ4C031ST6100 | Pipe Encasement for Storm Pipelines - (RD-C-3/1)-Z4-C031-ST | 2027-04-14 → 2027-04-12 (-2d) | 2027-04-19 → 2027-04-15 (-4d) |  | -170.02d → -168d |
| 2813 | **RHD4-02-002-Z4-C031-Catch Basin - ST** |  | 2027-04-28 → 2027-04-25 (-3d) |  |  |
| 2437 | **RHD4-02-002-C031-(ST)-Double Catch Basin Works** |  | 2027-04-15 → 2027-04-12 (-3d) |  |  |
| RHD4CZ4C031ST8300 | Rings & C.Slab & Final Backfillfor Double Catch Basin - (RD-C-3/1)-Z4-C031-ST | 2027-04-08 → 2027-04-06 (-2d) | 2027-04-11 → 2027-04-07 (-4d) |  | -162.02d → -160d |
| RHD4CZ4C031ST8400 | Steel Cover for Double Catch Basin - (RD-C-3/1)-Z4-C031-ST | 2027-04-11 → 2027-04-08 (-3d) | 2027-04-13 → 2027-04-10 (-3d) |  | -162.02d → -160d |
| RHD4CZ4C031ST8500 | Finishing and Insulation works for Double Catch Basin - (RD-C-3/1)-Z4-C031-ST | 2027-04-13 → 2027-04-11 (-2d) | 2027-04-15 → 2027-04-12 (-3d) |  | -162.02d → -160d |
| 2814 | **RHD4-02-002-C031-(ST)-Single Catch Basin Works** |  | 2027-04-28 → 2027-04-25 (-3d) |  |  |
| RHD4CZ4C031ST7100 | Excavation works for Single Catch Basin - (RD-C-3/1)-Z4-C031-ST |  | 2027-04-06 → 2027-04-03 (-3d) |  | -170.02d → -168d |
| RHD4CZ4C031ST7200 | PC Blinding, Installation and Pipe connection for Single Catch Basin - (RD-C-3/1)-Z4-C031-ST |  | 2027-04-08 → 2027-04-05 (-3d) |  | -170.02d → -168d |
| RHD4CZ4C031ST7300 | Rings & C.Slab & Final Backfill for Single Catch Basin - (RD-C-3/1)-Z4-C031-ST |  | 2027-04-14 → 2027-04-11 (-3d) |  | -170.02d → -168d |
| RHD4CZ4C031ST7400 | Steel Cover for Single Catch Basin - (RD-C-3/1)-Z4-C031-ST | 2027-04-14 → 2027-04-12 (-2d) | 2027-04-19 → 2027-04-15 (-4d) |  | -150.02d → -146d |
| RHD4CZ4C031ST7500 | Finishing and Insulation works for Single Catch Basin - (RD-C-3/1)-Z4-C031-ST | 2027-04-19 → 2027-04-17 (-2d) | 2027-04-28 → 2027-04-25 (-3d) |  | -150.02d → -146d |
| 2875 | **RHD4-02-002-Z4-C031-Potable Network - PT** | 2027-04-21 → 2026-11-07 (-165d) | 2027-05-19 → 2027-05-11 (-8d) |  |  |
| 2879 | **RHD4-02-002-C031-(PT)-HDPE Pipes - 400 mm diameter** | 2027-04-21 → 2026-11-07 (-165d) | 2027-05-03 → 2027-04-29 (-4d) |  |  |
| RHD4CZ4C031PT1103 | Excavation works for HDPE Pipline 400 mm - (RD-C-3/1)-Z4-C031-PT | 2027-04-21 → 2026-11-07 A (-165d) | 2027-04-24 → 2027-04-20 (-4d) | 0% → 37% | -170.02d → -168d |
| RHD4CZ4C031PT1203 | Bedding works for HDPE Pipline 400 mm - (RD-C-3/1)-Z4-C031-PT | 2027-04-24 → 2026-11-08 A (-167d) | 2027-04-26 → 2027-04-22 (-4d) | 0% → 7% | -170.02d → -168d |
| RHD4CZ4C031PT1303 | Installing for HDPE Pipline 400 mm - (RD-C-3/1)-Z4-C031-PT | 2027-04-26 → 2026-11-09 A (-168d) | 2027-04-28 → 2027-04-25 (-3d) | 0% → 44% | -170.02d → -168d |
| RHD4CZ4C031PT1503 | Backfilling and warning tape works for HDPE Pipline 400 mm - (RD-C-3/1)-Z4-C031-PT | 2027-05-01 → 2026-11-10 A (-172d) | 2027-05-03 → 2027-04-29 (-4d) | 0% → 62% | -170.02d → -168d |
| RHD4CZ4C031PT1403 | Primary Test for HDPE Pipline 400 mm - (RD-C-3/1)-Z4-C031-PT | 2027-04-28 → 2027-04-26 (-2d) | 2027-05-01 → 2027-04-27 (-4d) |  | -170.02d → -168d |
| 1751 | **RHD4-02-002-C031-(PT)-Air Valve Chambers** | 2027-04-24 → 2027-04-21 (-3d) | 2027-05-03 → 2027-04-29 (-4d) |  |  |
| RHD4CZ4C031PT2102 | Excavation and Bedding for Air Valve Chambers for Potable Water Network - (RD-C-3/1)-Z4-C031-PT | 2027-04-24 → 2027-04-21 (-3d) | 2027-04-26 → 2027-04-22 (-4d) |  | -139.02d → -137d |
| RHD4CZ4C031PT2202 | PC works for Air Valve Chambers for Potable Water Network - (RD-C-3/1)-Z4-C031-PT | 2027-04-26 → 2027-04-24 (-2d) | 2027-04-28 → 2027-04-25 (-3d) |  | -139.02d → -137d |
| RHD4CZ4C031PT2302 | Installation for Air Valve Chambers for Potable Water Network - (RD-C-3/1)-Z4-C031-PT | 2027-04-28 → 2027-04-26 (-2d) | 2027-05-01 → 2027-04-27 (-4d) |  | -139.02d → -137d |
| RHD4CZ4C031PT2402 | Backfilling works for Air Valve Chambers for Potable Water Network - (RD-C-3/1)-Z4-C031-PT | 2027-05-01 → 2027-04-28 (-3d) | 2027-05-03 → 2027-04-29 (-4d) |  | -139.02d → -137d |
| 1752 | **RHD4-02-002-C031-(PT)-Air Valves** | 2027-05-01 → 2027-04-28 (-3d) | 2027-05-05 → 2027-05-02 (-3d) |  |  |
| RHD4CZ4C031PT3103 | Installation for Air Valves for Potable Water Network - (RD-C-3/1)-Z4-C031-PT | 2027-05-01 → 2027-04-28 (-3d) | 2027-05-03 → 2027-04-29 (-4d) |  | -139.02d → -137d |
| RHD4CZ4C031PT3203 | Stem and Service box for Air Valves for Potable Water Network - (RD-C-3/1)-Z4-C031-PT | 2027-05-03 → 2027-05-01 (-2d) | 2027-05-05 → 2027-05-02 (-3d) |  | -139.02d → -137d |

| ID | Task | Start | Finish | Total float |
| --- | --- | --- | --- | --- |
| 2883 | **RHD4-02-002-C031-(PT)-Butterfly Valves** | 2027-05-03 → 2027-05-01 (-2d) | 2027-05-08 → 2027-05-04 (-4d) |  |
| RHD4CZ4C031PT3101 | Installation for Butterfly Valves for Potable Water Network - (RD-C-3/1)-Z4-C031-PT | 2027-05-03 → 2027-05-01 (-2d) | 2027-05-05 → 2027-05-02 (-3d) | -129.02d → -127d |
| RHD4CZ4C031PT3201 | Stem and Service box for Butterfly Valves for Potable Water Network - (RD-C-3/1)-Z4-C031-PT | 2027-05-05 → 2027-05-03 (-2d) | 2027-05-08 → 2027-05-04 (-4d) | -129.02d → -127d |
| 2888 | **RHD4-02-002-C031-(PT)-Fire Hydrant** | 2027-05-03 → 2027-05-01 (-2d) | 2027-05-19 → 2027-05-11 (-8d) |  |
| RHD4CZ4C031PT4100 | Excavation and Bedding and Pipe Installation for Fire Hydrant - (RD-C-3/1)-Z4-C031-PT | 2027-05-03 → 2027-05-01 (-2d) | 2027-05-05 → 2027-05-02 (-3d) | -138.02d → -136d |
| RHD4CZ4C031PT4200 | Valve Installation for Fire Hydrant - (RD-C-3/1)-Z4-C031-PT | 2027-05-05 → 2027-05-03 (-2d) | 2027-05-08 → 2027-05-04 (-4d) | -138.02d → -136d |
| RHD4CZ4C031PT4300 | Stem for Fire Hydrant - (RD-C-3/1)-Z4-C031-PT | 2027-05-08 → 2027-05-05 (-3d) | 2027-05-10 → 2027-05-06 (-4d) | -138.02d → -136d |
| RHD4CZ4C031PT4400 | Fire Installation for Fire Hydrant - (RD-C-3/1)-Z4-C031-PT | 2027-05-10 → 2027-05-08 (-2d) | 2027-05-12 → 2027-05-09 (-3d) | -138.02d → -136d |
| RHD4CZ4C031PT4500 | Protection Barriers for Fire Hydrant - (RD-C-3/1)-Z4-C031-PT | 2027-05-12 → 2027-05-10 (-2d) | 2027-05-19 → 2027-05-11 (-8d) | -138.02d → -136d |
| 2882 | **RHD4-02-002-C031-(PT)-Butterfly Valve Chamber** | 2027-04-26 → 2027-04-24 (-2d) | 2027-05-05 → 2027-05-02 (-3d) |  |
| RHD4CZ4C031PT2100 | Excavation and Bedding for Butterfly Valve Chamber for Potable Water Network - (RD-C-3/1)-Z4-C031-PT | 2027-04-26 → 2027-04-24 (-2d) | 2027-04-28 → 2027-04-25 (-3d) | -139.02d → -137d |
| RHD4CZ4C031PT2200 | PC works for Butterfly Valve Chamber for Potable Water Network - (RD-C-3/1)-Z4-C031-PT | 2027-04-28 → 2027-04-26 (-2d) | 2027-05-01 → 2027-04-27 (-4d) | -139.02d → -137d |
| RHD4CZ4C031PT2300 | Installation for Butterfly Valve Chamber for Potable Water Network - (RD-C-3/1)-Z4-C031-PT | 2027-05-01 → 2027-04-28 (-3d) | 2027-05-03 → 2027-04-29 (-4d) | -139.02d → -137d |
| RHD4CZ4C031PT2400 | Backfilling works for Butterfly Valve Chamber for Potable Water Network - (RD-C-3/1)-Z4-C031-PT | 2027-05-03 → 2027-05-01 (-2d) | 2027-05-05 → 2027-05-02 (-3d) | -139.02d → -137d |
| 2924 | **RHD4-02-002-Z4-C031-Medium Voltage Network - MV** | 2027-04-19 → 2027-04-17 (-2d) | 2027-05-03 → 2027-04-29 (-4d) |  |
| 2925 | **RHD4-02-002-C031-(MV)-Medium Voltage cable trench** | 2027-04-19 → 2027-04-17 (-2d) | 2027-05-01 → 2027-04-27 (-4d) |  |
| RHD4CZ4C031MV1100 | Excavation for Medium Voltage Trench - (RD-C-3/1)-Z4-C031-MV | 2027-04-19 → 2027-04-17 (-2d) | 2027-04-28 → 2027-04-25 (-3d) | -154.02d → -152d |
| RHD4CZ4C031MV1200 | Trench Backfilling for Medium Voltage Network - (RD-C-3/1)-Z4-C031-MV | 2027-04-28 → 2027-04-26 (-2d) | 2027-05-01 → 2027-04-27 (-4d) | -153.02d → -151d |
| 2926 | **RHD4-02-002-C031-(MV)-Medium Voltage duct banks** | 2027-04-19 → 2027-04-17 (-2d) | 2027-04-29 → 2027-04-26 (-3d) |  |
| RHD4CZ4C031MV2100 | Excavation of Duct Banks for Medium Voltage Network - (RD-C-3/1)-Z4-C031-MV | 2027-04-19 → 2027-04-17 (-2d) | 2027-04-21 → 2027-04-18 (-3d) | -154.02d → -152d |
| RHD4CZ4C031MV2200 | Installation of Duct Banks for Medium Voltage Network - (RD-C-3/1)-Z4-C031-MV | 2027-04-21 → 2027-04-19 (-2d) | 2027-04-25 → 2027-04-21 (-4d) | -125.02d → -123d |
| RHD4CZ4C031MV2300 | Pouring of Duct Banks for Medium Voltage Network - (RD-C-3/1)-Z4-C031-MV | 2027-04-25 → 2027-04-22 (-3d) | 2027-04-27 → 2027-04-24 (-3d) | -125.02d → -123d |
| RHD4CZ4C031MV2400 | Backfilling of Duct Banks for Medium Voltage Network - (RD-C-3/1)-Z4-C031-MV | 2027-04-27 → 2027-04-25 (-2d) | 2027-04-29 → 2027-04-26 (-3d) | -125.02d → -123d |
| 2927 | **RHD4-02-002-C031-(MV)-Medium Voltage cables 3Cx 500 mm²** | 2027-04-28 → 2027-04-26 (-2d) | 2027-05-03 → 2027-04-29 (-4d) |  |
| RHD4CZ4C031MV3100 | Installation of Medium Voltage Cables 3Cx 500 mm² - (RD-C-3/1)-Z4-C031-MV | 2027-04-28 → 2027-04-26 (-2d) | 2027-05-03 → 2027-04-29 (-4d) | -151.02d → -147d |
| RHD4CZ4C031MV3300 | Testing of Medium Voltage Cables 3Cx 500 mm² - (RD-C-3/1)-Z4-C031-MV | 2027-05-01 → 2027-04-28 (-3d) | 2027-05-03 → 2027-04-29 (-4d) | -147.02d → -145d |
| 2931 | **RHD4-02-002-Z4-C031-Low Voltage Network - LV** | 2027-05-03 → 2027-05-01 (-2d) | 2027-05-12 → 2027-05-09 (-3d) |  |
| 2934 | **RHD4-02-002-C031-(LV)-Low Voltage cables** | 2027-05-03 → 2027-05-01 (-2d) | 2027-05-12 → 2027-05-09 (-3d) |  |
| RHD4CZ4C031LV3100 | Excavation for Low Voltage Cables for Low Voltage Network - (RD-C-3/1)-Z4-C031-LV | 2027-05-03 → 2027-05-01 (-2d) | 2027-05-05 → 2027-05-02 (-3d) | -149.02d → -147d |
| RHD4CZ4C031LV3200 | Cable Laying of Low Voltage Cables for Low Voltage Network - (RD-C-3/1)-Z4-C031-LV | 2027-05-05 → 2027-05-03 (-2d) | 2027-05-08 → 2027-05-04 (-4d) | -149.02d → -147d |
| RHD4CZ4C031LV3300 | Warning tape and Backfill for Low Voltage Cables for Low Voltage Network - (RD-C-3/1)-Z4-C031-LV | 2027-05-08 → 2027-05-05 (-3d) | 2027-05-10 → 2027-05-06 (-4d) | -149.02d → -147d |
| RHD4CZ4C031LV3400 | Testing of Low Voltage Cables for Low Voltage Network - (RD-C-3/1)-Z4-C031-LV | 2027-05-10 → 2027-05-08 (-2d) | 2027-05-12 → 2027-05-09 (-3d) | -149.02d → -147d |
| 2937 | **RHD4-02-002-Z4-C031-Street Lighting Network - SL** | 2027-04-21 → 2027-04-19 (-2d) | 2027-05-24 → 2027-05-20 (-4d) |  |
| 2938 | **RHD4-02-002-C031-(SL)-Street Lighting duct banks** | 2027-04-21 → 2027-04-19 (-2d) | 2027-05-02 → 2027-04-28 (-4d) |  |
| RHD4CZ4C031SL2100 | Excavation of Duct Banks for Street Lighting Network - (RD-C-3/1)-Z4-C031-SL | 2027-04-21 → 2027-04-19 (-2d) | 2027-04-24 → 2027-04-20 (-4d) | -154.02d → -152d |
| RHD4CZ4C031SL2200 | Installation of Duct Banks for Street Lighting Network - (RD-C-3/1)-Z4-C031-SL | 2027-04-24 → 2027-04-21 (-3d) | 2027-04-27 → 2027-04-24 (-3d) | -154.02d → -152d |
| RHD4CZ4C031SL2300 | Pouring of Duct Banks for Street Lighting Network - (RD-C-3/1)-Z4-C031-SL | 2027-04-27 → 2027-04-25 (-2d) | 2027-04-29 → 2027-04-26 (-3d) | -154.02d → -152d |
| RHD4CZ4C031SL2400 | Backfilling of Duct Banks for Street Lighting Network - (RD-C-3/1)-Z4-C031-SL | 2027-04-29 → 2027-04-27 (-2d) | 2027-05-02 → 2027-04-28 (-4d) | -154.02d → -152d |
| 2939 | **RHD4-02-002-C031-(SL)-Street Lighting Drawpit** | 2027-05-04 → 2027-05-02 (-2d) | 2027-05-09 → 2027-05-05 (-4d) |  |
| RHD4CZ4C031SL5100 | Excavation of Drawpit size 600x600x900mm for Street Lighting Network - (RD-C-3/1)-Z4-C031-SL | 2027-05-04 → 2027-05-02 (-2d) | 2027-05-06 → 2027-05-03 (-3d) | -154.02d → -150d |
| RHD4CZ4C031SL5200 | Installation of Drawpit size 600x600x900mm for Street Lighting Network - (RD-C-3/1)-Z4-C031-SL | 2027-05-06 → 2027-05-04 (-2d) | 2027-05-09 → 2027-05-05 (-4d) | -154.02d → -150d |
| 2940 | **RHD4-02-002-C031-(SL)-Street Lighting cables** | 2027-05-03 → 2027-05-01 (-2d) | 2027-05-19 → 2027-05-11 (-8d) |  |
| RHD4CZ4C031SL3100 | Excavation for Street Lighting Cables for Street Lighting Network - (RD-C-3/1)-Z4-C031-SL | 2027-05-03 → 2027-05-01 (-2d) | 2027-05-05 → 2027-05-02 (-3d) | -147.02d → -145d |
| RHD4CZ4C031SL3200 | Cable Laying of Street Lighting Cables for Street Lighting Network - (RD-C-3/1)-Z4-C031-SL | 2027-05-05 → 2027-05-03 (-2d) | 2027-05-08 → 2027-05-04 (-4d) | -147.02d → -145d |
| RHD4CZ4C031SL3300 | Warning tape and Backfill for Street Lighting Cables for Street Lighting Network - (RD-C-3/1)-Z4-C031-SL | 2027-05-08 → 2027-05-05 (-3d) | 2027-05-10 → 2027-05-06 (-4d) | -147.02d → -145d |
| RHD4CZ4C031SL3400 | Testing of Street Lighting Cables for Street Lighting Network - (RD-C-3/1)-Z4-C031-SL | 2027-05-12 → 2027-05-10 (-2d) | 2027-05-19 → 2027-05-11 (-8d) | -149.02d → -147d |
| 2941 | **RHD4-02-002-C031-(SL)-Street Lighting Poles** | 2027-05-02 → 2027-04-29 (-3d) | 2027-05-24 → 2027-05-20 (-4d) |  |
| RHD4CZ4C031SL1100 | Excavation for RC Base for Lighting Poles for Street Lighting Network - (RD-C-3/1)-Z4-C031-SL | 2027-05-02 → 2027-04-29 (-3d) | 2027-05-04 → 2027-05-01 (-3d) | -154.02d → -152d |
| RHD4CZ4C031SL1200 | Installation for RC Base for Lighting Poles for Street Lighting Network - (RD-C-3/1)-Z4-C031-SL | 2027-05-04 → 2027-05-02 (-2d) | 2027-05-06 → 2027-05-03 (-3d) | -144.02d → -142d |
| RHD4CZ4C031SL1300 | Backfill for RC Base for Lighting Poles for Street Lighting Network - (RD-C-3/1)-Z4-C031-SL | 2027-05-06 → 2027-05-04 (-2d) | 2027-05-09 → 2027-05-05 (-4d) | -144.02d → -142d |
| RHD4CZ4C031SL1400 | Installation for Lighting Poles for Street Lighting Network - (RD-C-3/1)-Z4-C031-SL | 2027-05-19 → 2027-05-12 (-7d) | 2027-05-22 → 2027-05-13 (-9d) | -149.02d → -147d |
| RHD4CZ4C031SL1500 | Luminaire Installation for Lighting Poles for Street Lighting Network - (RD-C-3/1)-Z4-C031-SL | 2027-05-22 → 2027-05-19 (-3d) | 2027-05-24 → 2027-05-20 (-4d) | -149.02d → -147d |
| 2943 | **RHD4-02-002-C031-(SL)-Street Lighting Earthing System** | 2027-05-22 → 2027-05-19 (-3d) | 2027-05-24 → 2027-05-20 (-4d) |  |
| RHD4CZ4C031SL6100 | Installation of Earthing for Lighting Poles and Fedder Pillers for Street Lighting Network - (RD-C-3/1)-Z4-C031-SL | 2027-05-22 → 2027-05-19 (-3d) | 2027-05-24 → 2027-05-20 (-4d) | -149.02d → -147d |
| 2949 | **RHD4-02-002-Z4-C031-Telecommunications Network - TC** | 2027-05-04 → 2027-05-02 (-2d) | 2027-05-13 → 2027-05-10 (-3d) |  |
| 2950 | **RHD4-02-002-C031-(TC)-Telecommunications Ducts** | 2027-05-04 → 2027-05-02 (-2d) | 2027-05-13 → 2027-05-10 (-3d) |  |
| RHD4CZ4C031TC2100 | Excavation of HDPE Ducts for Telecom Network - (RD-C-3/1)-Z4-C031-TC | 2027-05-04 → 2027-05-02 (-2d) | 2027-05-06 → 2027-05-03 (-3d) | -154.02d → -152d |
| RHD4CZ4C031TC2200 | Installation of HDPE Ducts for Telecom Network - (RD-C-3/1)-Z4-C031-TC | 2027-05-06 → 2027-05-04 (-2d) | 2027-05-09 → 2027-05-05 (-4d) | -146.02d → -144d |
| RHD4CZ4C031TC2400 | Backfilling of HDPE Ducts for Telecom Network - (RD-C-3/1)-Z4-C031-TC | 2027-05-11 → 2027-05-09 (-2d) | 2027-05-13 → 2027-05-10 (-3d) | -148.02d → -146d |
| 2951 | **RHD4-02-002-C031-(TC)-Telecommunications Manholes** | 2027-05-06 → 2027-05-04 (-2d) | 2027-05-11 → 2027-05-08 (-3d) |  |
| RHD4CZ4C031TC5100 | Excavation for Manholes for Telecom Network - (RD-C-3/1)-Z4-C031-TC | 2027-05-06 → 2027-05-04 (-2d) | 2027-05-09 → 2027-05-05 (-4d) | -154.02d → -152d |
| RHD4CZ4C031TC5200 | Installation of Manholes for Telecom Network - (RD-C-3/1)-Z4-C031-TC | 2027-05-09 → 2027-05-06 (-3d) | 2027-05-11 → 2027-05-08 (-3d) | -148.02d → -146d |
| 2953 | **RHD4-02-002-Z4-C031-Information and Communication Technologies - ICT** | 2027-02-09 → 2027-02-08 (-1d) | 2027-05-25 → 2027-05-22 (-3d) |  |
| 2954 | **RHD4-02-002-C031-(ICT)-Information and Communication Technologies Ducts** | 2027-05-09 → 2027-05-06 (-3d) | 2027-05-25 → 2027-05-22 (-3d) |  |
| RHD4CZ4C031ICT2100 | Excavation of HDPE Ducts for ICT Network - (RD-C-3/1)-Z4-C031-ICT | 2027-05-09 → 2027-05-06 (-3d) | 2027-05-12 → 2027-05-09 (-3d) | -154.02d → -152d |
| RHD4CZ4C031ICT2200 | Installation of HDPE Ducts for ICT Network - (RD-C-3/1)-Z4-C031-ICT | 2027-05-12 → 2027-05-10 (-2d) | 2027-05-22 → 2027-05-13 (-9d) | -154.02d → -152d |
| RHD4CZ4C031ICT2400 | Backfilling of HDPE Ducts for ICT Network - (RD-C-3/1)-Z4-C031-ICT | 2027-05-22 → 2027-05-19 (-3d) | 2027-05-25 → 2027-05-22 (-3d) | -154.02d → -152d |
| 2955 | **RHD4-02-002-C031-(ICT)-Information and Communication Technologies Manholes** | 2027-05-12 → 2027-05-10 (-2d) | 2027-05-22 → 2027-05-13 (-9d) |  |
| RHD4CZ4C031ICT5100 | Excavation for Manholes for ICT Network - (RD-C-3/1)-Z4-C031-ICT | 2027-05-12 → 2027-05-10 (-2d) | 2027-05-19 → 2027-05-11 (-8d) | -154.02d → -152d |
| RHD4CZ4C031ICT5200 | Installation of Manholes for ICT Network - (RD-C-3/1)-Z4-C031-ICT | 2027-05-19 → 2027-05-12 (-7d) | 2027-05-22 → 2027-05-13 (-9d) | -154.02d → -152d |

| ID | Task | Start | Finish | Complete | Total float |
| --- | --- | --- | --- | --- | --- |
| 2956 | **RHD4-02-002-C031-(ICT)-Information and Communication Technologies Road Crossings** | 2027-02-09 → 2027-02-08 (-1d) | 2027-02-20 → 2027-02-16 (-4d) |  |  |
| RHD4CZ4C031ICT3100 | Excavation for Road Crossings for ICT Network - (RD-C-3/1)-Z4-C031-ICT | 2027-02-09 → 2027-02-08 (-1d) | 2027-02-11 → 2027-02-09 (-2d) |  | -152.02d → -149d |
| RHD4CZ4C031ICT3200 | Installation of Road Crossings for ICT Network - (RD-C-3/1)-Z4-C031-ICT | 2027-02-14 → 2027-02-10 (-4d) | 2027-02-15 → 2027-02-11 (-4d) |  | -154d → -149d |
| RHD4CZ4C031ICT3300 | Pouring of Road Crossings for ICT Network - (RD-C-3/1)-Z4-C031-ICT | 2027-02-16 → 2027-02-13 (-3d) | 2027-02-17 → 2027-02-14 (-3d) |  | -154d → -149d |
| RHD4CZ4C031ICT3400 | Backfilling of Road Crossings for ICT Network - (RD-C-3/1)-Z4-C031-ICT | 2027-02-18 → 2027-02-15 (-3d) | 2027-02-20 → 2027-02-16 (-4d) |  | -154d → -149d |
| 2957 | **RHD4-02-002-Z4-C031-Security Network - CCTV** | 2027-05-25 → 2027-05-23 (-2d) | 2027-07-07 → 2027-07-04 (-3d) |  |  |
| 2958 | **RHD4-02-002-C031-(CCTV)-Civil Works** | 2027-05-25 → 2027-05-23 (-2d) | 2027-06-06 → 2027-06-02 (-4d) |  |  |
| RHD4CZ4C031CCTV2100 | Civil Works for Security Network - (RD-C-3/1)-Z4-C031-CCTV | 2027-05-25 → 2027-05-23 (-2d) | 2027-06-06 → 2027-06-02 (-4d) |  | -154.02d → -152d |
| 2959 | **RHD4-02-002-C031-(CCTV)-CCTV Poles** | 2027-06-06 → 2027-06-03 (-3d) | 2027-06-17 → 2027-06-14 (-3d) |  |  |
| RHD4CZ4C031CCTV1100 | Excavation for RC Base for CCTV Poles for Security Network - (RD-C-3/1)-Z4-C031-CCTV | 2027-06-06 → 2027-06-03 (-3d) | 2027-06-08 → 2027-06-05 (-3d) |  | -154.02d → -152d |
| RHD4CZ4C031CCTV1200 | Installation for RC Base for CCTV Poles for Security Network - (RD-C-3/1)-Z4-C031-CCTV | 2027-06-08 → 2027-06-06 (-2d) | 2027-06-10 → 2027-06-07 (-3d) |  | -154.02d → -152d |
| RHD4CZ4C031CCTV1300 | Backfill for RC Base for CCTV Poles for Security Network - (RD-C-3/1)-Z4-C031-CCTV | 2027-06-10 → 2027-06-08 (-2d) | 2027-06-13 → 2027-06-09 (-4d) |  | -154.02d → -152d |
| RHD4CZ4C031CCTV1400 | Installation for CCTV Poles for Security Network - (RD-C-3/1)-Z4-C031-CCTV | 2027-06-13 → 2027-06-10 (-3d) | 2027-06-15 → 2027-06-12 (-3d) |  | -154.02d → -152d |
| RHD4CZ4C031CCTV1500 | Protection post Installation for CCTV Poles for Security Network - (RD-C-3/1)-Z4-C031-CCTV | 2027-06-15 → 2027-06-13 (-2d) | 2027-06-17 → 2027-06-14 (-3d) |  | -154.02d → -152d |
| 2960 | **RHD4-02-002-C031-(CCTV)-Camera** | 2027-06-17 → 2027-06-15 (-2d) | 2027-06-20 → 2027-06-16 (-4d) |  |  |
| RHD4CZ4C031CCTV3100 | Installation for Cameras for Security Network - (RD-C-3/1)-Z4-C031-CCTV | 2027-06-17 → 2027-06-15 (-2d) | 2027-06-20 → 2027-06-16 (-4d) |  | -134.02d → -132d |
| 2961 | **RHD4-02-002-C031-(CCTV)-Power and Infrastructure** | 2027-06-15 → 2027-06-13 (-2d) | 2027-06-20 → 2027-06-16 (-4d) |  |  |
| RHD4CZ4C031CCTV4100 | Installation of Power outlet, UPS and midspan for PTZ Camerafor Cameras for Security Network - (RD-C-3/1)-Z4-C031-CCTV | 2027-06-15 → 2027-06-13 (-2d) | 2027-06-17 → 2027-06-14 (-3d) |  | -134.02d → -132d |
| RHD4CZ4C031CCTV4200 | Short Range Wireless PoP wireless Bridgefor CCTV Poles for Security Network - (RD-C-3/1)-Z4-C031-CCTV | 2027-06-17 → 2027-06-15 (-2d) | 2027-06-20 → 2027-06-16 (-4d) |  | -134.02d → -132d |
| 2963 | **RHD4-02-002-C031-(CCTV)-CCTV Panels and Components** | 2027-06-20 → 2027-06-17 (-3d) | 2027-07-07 → 2027-07-04 (-3d) |  |  |
| RHD4CZ4C031CCTV6100 | Installation for CCTV Panels for Security Network - (RD-C-3/1)-Z4-C031-CCTV | 2027-06-20 → 2027-06-17 (-3d) | 2027-07-07 → 2027-07-04 (-3d) |  | -134.02d → -132d |
| 2407 | **RHD4-02-002-Z4-L014** |  | 2028-03-09 → 2028-03-06 (-3d) |  |  |
| 2586 | **RHD4-02-002-Z4-L014-Road Works - RD** |  | 2028-03-09 → 2028-03-06 (-3d) |  |  |
| 2588 | **RHD4-02-002-L014-(RD)-Aggregate Base Course** | 2027-02-14 → 2027-02-27 (+13d) | 2027-03-03 → 2027-03-18 (+15d) |  |  |
| RHD4CZ4L014RD2100 | Supply, lay and compaction Aggregate base course compacted thickness 300 mmfor Roads - (RD-L-14)-Z4-L014-RD | 2027-02-14 → 2027-02-27 (+13d) | 2027-03-03 → 2027-03-18 (+15d) |  | -142d → -150d |
| 2589 | **RHD4-02-002-L014-(RD)-Bituminous base course Two Layers, including (MC1)&(RC2)** | 2027-03-04 → 2027-03-20 (+16d) | 2028-01-18 → 2028-01-15 (-3d) |  |  |
| RHD4CZ4L014RD3100 | Supply, lay and Asphaltic base course including Prime Coat (MC1) for 1st Layer - (RD-L-14)-Z4-L014-RD | 2027-03-04 → 2027-03-20 (+16d) | 2027-03-07 → 2027-03-22 (+15d) |  | -142d → -150d |
| RHD4CZ4L014RD3200 | Supply, lay and Asphaltic base course including Tack Coat (RC2) for 2nd Layer - (RD-L-14)-Z4-L014-RD | 2028-01-15 → 2028-01-12 (-3d) | 2028-01-18 → 2028-01-15 (-3d) |  | -100.02d → -98d |
| 2591 | **RHD4-02-002-L014-(RD)-Precast Concrete Curb** | 2028-01-18 → 2028-01-16 (-2d) | 2028-01-30 → 2028-01-26 (-4d) |  |  |
| RHD4CZ4L014RD5100 | Supply and installation Precast Concrete Kerb for Roads - (RD-L-14)-Z4-L014-RD | 2028-01-18 → 2028-01-16 (-2d) | 2028-01-30 → 2028-01-26 (-4d) |  | -100.02d → -98d |
| 2594 | **RHD4-02-002-L014-(RD)-Traffic Signage** | 2028-01-30 → 2028-01-27 (-3d) | 2028-02-07 → 2028-02-03 (-4d) |  |  |
| RHD4CZ4L014RD8100 | Installation of Traffic Signage for Road Network - (RD-L-14)-Z4-L014-RD | 2028-01-30 → 2028-01-27 (-3d) | 2028-02-07 → 2028-02-03 (-4d) |  | -100.02d → -98d |
| 2592 | **RHD4-02-002-L014-(RD)-Precast Interlocking Block Pavers** | 2028-02-07 → 2028-02-05 (-2d) | 2028-03-01 → 2028-02-23 (-7d) |  |  |
| RHD4CZ4L014RD6100 | Interlocking block pavers for sidewalk-footpath for Side walks and Parking areas - (RD-L-14)-Z4-L014-RD | 2028-02-07 → 2028-02-05 (-2d) | 2028-03-01 → 2028-02-23 (-7d) |  | -100.02d → -98d |
| 2590 | **RHD4-02-002-L014-(RD)-Bituminous concrete wearing course including tack coat (RC2)** | 2028-03-01 → 2028-02-24 (-6d) | 2028-03-05 → 2028-03-01 (-4d) |  |  |
| RHD4CZ4L014RD4100 | Supply, lay and compaction Asphaltic wearing course including tack Coat (RC2)for Road Network - (RD-L-14)-Z4-L014-RD | 2028-03-01 → 2028-02-24 (-6d) | 2028-03-05 → 2028-03-01 (-4d) |  | -100.02d → -98d |
| 2593 | **RHD4-02-002-L014-(RD)-Pavement Marking** | 2028-03-05 → 2028-03-02 (-3d) | 2028-03-09 → 2028-03-06 (-3d) |  |  |
| RHD4CZ4L014RD7100 | Pavement Markings for Road Network - (RD-L-14)-Z4-L014-RD | 2028-03-05 → 2028-03-02 (-3d) | 2028-03-09 → 2028-03-06 (-3d) |  | -100.02d → -98d |
| 2411 | **RHD4-02-002-Z4-L014-Storm Network - ST** |  | 2027-05-01 → 2027-04-29 (-2d) |  |  |
| 6394 | **RHD4-02-002-L014-(ST)-GRP Pipes - 1400 mm diameter** | 2027-01-31 → 2027-02-07 (+7d) | 2027-02-13 → 2027-02-25 (+12d) |  |  |
| RHD4CZ4L014ST1110 | Excavation works for GRP Pipe Line 1400 mm - (RD-L-14)-Z4-L014-ST | 2027-01-31 → 2027-02-07 (+7d) | 2027-02-01 → 2027-02-08 (+7d) |  | -182d → -188d |
| RHD4CZ4L014ST1210 | Bedding works for GRP Pipe Line 1400 mm - (RD-L-14)-Z4-L014-ST | 2027-02-04 → 2027-02-16 (+12d) | 2027-02-06 → 2027-02-17 (+11d) |  | -176d → -186d |
| RHD4CZ4L014ST1310 | Installing for GRP Pipe Line 1400 mm - (RD-L-14)-Z4-L014-ST | 2027-02-07 → 2027-02-18 (+11d) | 2027-02-08 → 2027-02-20 (+12d) |  | -176d → -186d |
| RHD4CZ4L014ST1410 | Primary Test for GRP Pipe Line 1400 mm - (RD-L-14)-Z4-L014-ST | 2027-02-09 → 2027-02-21 (+12d) | 2027-02-10 → 2027-02-23 (+13d) |  | -176d → -186d |
| RHD4CZ4L014ST1510 | Backfilling and warning tape works for GRP Pipe Line 1400 mm - (RD-L-14)-Z4-L014-ST | 2027-02-11 → 2027-02-24 (+13d) | 2027-02-13 → 2027-02-25 (+12d) |  | -176d → -186d |
| 6393 | **RHD4-02-002-L014-(ST)-GRP Pipes - 1300 mm diameter** |  | 2027-02-16 → 2027-03-01 (+13d) |  |  |
| RHD4CZ4L014ST1409 | Primary Test for GRP Pipe Line 1300 mm - (RD-L-14)-Z4-L014-ST | 2027-02-02 → 2027-02-09 (+7d) | 2027-02-03 → 2027-02-10 (+7d) |  | -168d → -174d |
| RHD4CZ4L014ST1509 | Backfilling and warning tape works for GRP Pipe Line 1300 mm - (RD-L-14)-Z4-L014-ST | 2027-02-14 → 2027-02-27 (+13d) | 2027-02-16 → 2027-03-01 (+13d) |  | -176d → -186d |
| 2428 | **RHD4-02-002-L014-(ST)-MH Works - 1200 mm diameter** |  | 2027-03-01 → 2027-03-16 (+15d) |  |  |
| RHD4CZ4L014ST3100 | Excavation and PC Blinding works for MH 1200 mm - (RD-L-14)-Z4-L014-ST |  | 2027-02-18 → 2027-03-03 (+13d) |  | -176d → -186d |
| RHD4CZ4L014ST3200 | Installation of Base for MH 1200 mm - (RD-L-14)-Z4-L014-ST |  | 2027-02-21 → 2027-03-06 (+13d) |  | -166d → -176d |
| RHD4CZ4L014ST3300 | MH Ring and C.Slab works and Backfilling works for MH 1200 mm - (RD-L-14)-Z4-L014-ST |  | 2027-02-24 → 2027-03-08 (+12d) |  | -166d → -176d |
| RHD4CZ4L014ST3400 | Steel Cover for MH 1200 mm - (RD-L-14)-Z4-L014-ST | 2027-02-25 → 2027-03-13 (+16d) | 2027-02-27 → 2027-03-14 (+15d) |  | -166d → -176d |
| RHD4CZ4L014ST3500 | Finishing, Benching, Testing works for MH 1200 mm - (RD-L-14)-Z4-L014-ST | 2027-02-28 → 2027-03-15 (+15d) | 2027-03-01 → 2027-03-16 (+15d) |  | -166d → -176d |
| 2430 | **RHD4-02-002-L014-(ST)-MH Works - 2000 mm diameter** |  | 2027-04-20 → 2027-04-17 (-3d) |  |  |
| RHD4CZ4L014ST3102 | Excavation and PC Blinding works for MH 2000 mm - (RD-L-14)-Z4-L014-ST |  | 2027-03-23 → 2027-03-20 (-3d) |  | -197.02d → -195d |
| RHD4CZ4L014ST3202 | Installation of Base for MH 2000 mm - (RD-L-14)-Z4-L014-ST |  | 2027-03-25 → 2027-03-24 (-1d) |  | -152.02d → -150d |
| RHD4CZ4L014ST3302 | MH Ring and C.Slab works and Backfilling works for MH 2000 mm - (RD-L-14)-Z4-L014-ST |  | 2027-04-04 → 2027-04-03 (-1d) |  | -152.02d → -150d |
| RHD4CZ4L014ST3402 | Steel Cover for MH 2000 mm - (RD-L-14)-Z4-L014-ST | 2027-04-06 → 2027-04-04 (-2d) | 2027-04-13 → 2027-04-10 (-3d) |  | -139.02d → -135d |
| RHD4CZ4L014ST3502 | Finishing, Benching, Testing works for MH 2000 mm - (RD-L-14)-Z4-L014-ST | 2027-04-13 → 2027-04-11 (-2d) | 2027-04-20 → 2027-04-17 (-3d) |  | -139.02d → -135d |
| 2429 | **RHD4-02-002-L014-(ST)-MH Works - 1500 mm diameter** |  | 2027-05-01 → 2027-04-29 (-2d) |  |  |
| RHD4CZ4L014ST3201 | Installation of Base for MH 1500 mm - (RD-L-14)-Z4-L014-ST |  | 2027-03-28 → 2027-03-27 (-1d) |  | -146.02d → -144d |
| RHD4CZ4L014ST3301 | MH Ring and C.Slab works and Backfilling works for MH 1500 mm - (RD-L-14)-Z4-L014-ST |  | 2027-04-06 → 2027-04-05 (-1d) |  | -152.02d → -150d |
| RHD4CZ4L014ST3401 | Steel Cover for MH 1500 mm - (RD-L-14)-Z4-L014-ST |  | 2027-04-28 → 2027-04-27 (-1d) |  | -152.02d → -150d |
| RHD4CZ4L014ST3501 | Finishing, Benching, Testing works for MH 1500 mm - (RD-L-14)-Z4-L014-ST |  | 2027-05-01 → 2027-04-29 (-2d) |  | -152.02d → -150d |
| 2419 | **RHD4-02-002-L014-(ST)-GRP Pipes - 1100 mm diameter** |  | 2027-04-03 → 2027-03-30 (-4d) |  |  |
| RHD4CZ4L014ST1107 | Excavation works for GRP Pipe Line 1100 mm - (RD-L-14)-Z4-L014-ST |  | 2027-03-27 → 2027-03-23 (-4d) | 70% → 67% | -139.02d → -135d |
| RHD4CZ4L014ST1207 | Bedding works for GRP Pipe Line 1100 mm - (RD-L-14)-Z4-L014-ST |  | 2027-03-28 → 2027-03-24 (-4d) | 70% → 67% | -96.02d → -94d |
| RHD4CZ4L014ST1307 | Installing for GRP Pipe Line 1100 mm - (RD-L-14)-Z4-L014-ST |  | 2027-03-29 → 2027-03-25 (-4d) | 70% → 67% | -96.02d → -94d |
| RHD4CZ4L014ST1507 | Backfilling and warning tape works for GRP Pipe Line 1100 mm - (RD-L-14)-Z4-L014-ST | 2027-03-31 → 2026-11-12 A (-139d) | 2027-04-03 → 2027-03-30 (-4d) | 0% → 67% | -96.02d → -92d |

| ID | Task | Start | Finish | Complete | Total float |
| --- | --- | --- | --- | --- | --- |
| RHD4CZ4L014ST1407 | Primary Test for GRP Pipe Line 1100 mm - (RD-L-14)-Z4-L014-ST | 2027-03-29 → 2027-03-27 (-2d) | 2027-03-31 → 2027-03-28 (-3d) |  | -96.02d → -94d |
| 2418 | **RHD4-02-002-L014-(ST)-GRP Pipes - 1000 mm diameter** |  | 2027-04-05 → 2027-03-30 (-6d) |  |  |
| RHD4CZ4L014ST1506 | Backfilling and warning tape works for GRP Pipe Line 1000 mm - (RD-L-14)-Z4-L014-ST | 2027-04-03 → 2026-11-07 A (-147d) | 2027-04-05 → 2026-11-09 A (-147d) | 0% → 100% | -96.02d → none |
| RHD4CZ4L014ST1406 | Primary Test for GRP Pipe Line 1000 mm - (RD-L-14)-Z4-L014-ST | 2027-03-31 → 2027-03-29 (-2d) | 2027-04-03 → 2027-03-30 (-4d) |  | -96.02d → -94d |
| RHD4CZ4L014ST1405 | Primary Test for GRP Pipe Line 900 mm - (RD-L-14)-Z4-L014-ST | 2027-04-03 → 2027-04-04 (+1d) |  |  | -96.02d → -97d |
| 2413 | **RHD4-02-002-L014-(ST)-GRP Pipes - 500 mm diameter** |  | 2027-03-29 → 2027-03-25 (-4d) |  |  |
| RHD4CZ4L014ST1401 | Primary Test for GRP Pipe Line 500 mm - (RD-L-14)-Z4-L014-ST | 2027-03-27 → 2027-03-24 (-3d) | 2027-03-29 → 2027-03-25 (-4d) |  | -136.02d → -132d |
| 2412 | **RHD4-02-002-L014-(ST)-GRP Pipes - 400 mm diameter** |  | 2027-04-06 → 2027-04-03 (-3d) |  |  |
| RHD4CZ4L014ST1100 | Excavation works for GRP Pipe Line 400 mm - (RD-L-14)-Z4-L014-ST |  | 2027-03-28 → 2027-03-24 (-4d) |  | -139.02d → -135d |
| RHD4CZ4L014ST1200 | Bedding works for GRP Pipe Line 400 mm - (RD-L-14)-Z4-L014-ST |  | 2027-03-30 → 2027-03-27 (-3d) |  | -139.02d → -135d |
| RHD4CZ4L014ST1300 | Installing for GRP Pipe Line 400 mm - (RD-L-14)-Z4-L014-ST |  | 2027-04-01 → 2027-03-29 (-3d) |  | -139.02d → -135d |
| RHD4CZ4L014ST1500 | Backfilling and warning tape works for GRP Pipe Line 400 mm - (RD-L-14)-Z4-L014-ST |  | 2027-04-06 → 2027-04-03 (-3d) |  | -139.02d → -135d |
| RHD4CZ4L014ST1400 | Primary Test for GRP Pipe Line 400 mm - (RD-L-14)-Z4-L014-ST | 2027-04-01 → 2027-03-30 (-2d) | 2027-04-04 → 2027-03-31 (-4d) |  | -139.02d → -135d |
| 2426 | **RHD4-02-002-L014-(ST)-UPVC Pipes - 300 mm diameter** |  | 2027-04-26 → 2027-04-25 (-1d) |  |  |
| RHD4CZ4L014ST2100 | Excavation works for UPVC Pipe Line 300 mm - (RD-L-14)-Z4-L014-ST |  | 2027-04-11 → 2027-04-10 (-1d) | 31% → 82% | -152.02d → -150d |
| RHD4CZ4L014ST2200 | Bedding works for UPVC Pipe Line 300 mm - (RD-L-14)-Z4-L014-ST |  | 2027-04-14 → 2027-04-13 (-1d) | 8% → 27% | -152.02d → -150d |
| RHD4CZ4L014ST2300 | Installing for UPVC Pipe Line 300 mm - (RD-L-14)-Z4-L014-ST |  | 2027-04-19 → 2027-04-18 (-1d) | 10% → 28% | -152.02d → -150d |
| RHD4CZ4L014ST2500 | Backfilling and warning tape works for UPVC Pipe Line 300 mm - (RD-L-14)-Z4-L014-ST |  | 2027-04-26 → 2027-04-25 (-1d) | 8% → 13% | -152.02d → -150d |
| RHD4CZ4L014ST2400 | Primary Test for UPVC Pipe Line 300 mm - (RD-L-14)-Z4-L014-ST |  | 2027-04-21 → 2027-04-20 (-1d) |  | -152.02d → -150d |
| 2434 | **RHD4-02-002-L014-(ST)-Concrete Encasement** |  | 2027-04-19 → 2027-04-18 (-1d) |  |  |
| RHD4CZ4L014ST6100 | Pipe Encasement for Storm Pipelines - (RD-L-14)-Z4-L014-ST |  | 2027-04-19 → 2027-04-18 (-1d) |  | -150.02d → -148d |
| 2435 | **RHD4-02-002-Z4-L014-Catch Basin - ST** |  | 2027-05-13 → 2027-05-12 (-1d) |  |  |
| 2436 | **RHD4-02-002-L014-(ST)-Single Catch Basin Works** |  | 2027-05-11 → 2027-05-10 (-1d) |  |  |
| RHD4CZ4L014ST7100 | Excavation works for Single Catch Basin - (RD-L-14)-Z4-L014-ST |  | 2027-04-12 → 2027-04-11 (-1d) |  | -146.02d → -146d |
| RHD4CZ4L014ST7200 | PC Blinding, Installation and Pipe connection for Single Catch Basin - (RD-L-14)-Z4-L014-ST |  | 2027-04-18 → 2027-04-17 (-1d) |  | -146.02d → -146d |
| RHD4CZ4L014ST7300 | Rings & C.Slab & Final Backfill for Single Catch Basin - (RD-L-14)-Z4-L014-ST |  | 2027-04-25 → 2027-04-24 (-1d) |  | -146.02d → -146d |
| RHD4CZ4L014ST7400 | Steel Cover for Single Catch Basin - (RD-L-14)-Z4-L014-ST |  | 2027-05-01 → 2027-04-29 (-2d) |  | -146.02d → -146d |
| RHD4CZ4L014ST7500 | Finishing and Insulation works for Single Catch Basin - (RD-L-14)-Z4-L014-ST |  | 2027-05-11 → 2027-05-10 (-1d) |  | -146.02d → -146d |
| 2437 | **RHD4-02-002-L014-(ST)-Double Catch Basin Works** |  | 2027-05-13 → 2027-05-12 (-1d) |  |  |
| RHD4CZ4L014ST8100 | Excavation works for Double Catch Basin - (RD-L-14)-Z4-L014-ST |  | 2027-04-14 → 2027-04-13 (-1d) |  | -129.02d → -129d |
| RHD4CZ4L014ST8200 | PC Blinding, Installation and Pipe connection for Double Catch Basin - (RD-L-14)-Z4-L014-ST |  | 2027-04-20 → 2027-04-19 (-1d) |  | -132.02d → -132d |
| RHD4CZ4L014ST8300 | Rings & C.Slab & Final Backfillfor Double Catch Basin - (RD-L-14)-Z4-L014-ST |  | 2027-04-27 → 2027-04-26 (-1d) |  | -136.02d → -136d |
| RHD4CZ4L014ST8400 | Steel Cover for Double Catch Basin - (RD-L-14)-Z4-L014-ST |  | 2027-05-03 → 2027-05-02 (-1d) |  | -139.02d → -139d |
| RHD4CZ4L014ST8500 | Finishing and Insulation works for Double Catch Basin - (RD-L-14)-Z4-L014-ST |  | 2027-05-13 → 2027-05-12 (-1d) |  | -146.02d → -146d |
| 2460 | **RHD4-02-002-Z4-L014-Sewage Network - SW** |  | 2027-06-22 → 2027-06-20 (-2d) |  |  |
| 5307 | **RHD4-02-002-L014-(SW)-MH Works - 1200 mm diameter** |  | 2027-06-22 → 2027-06-20 (-2d) |  |  |
| RHD4CZ4L014SW3100 | Excavation and PC Blinding works for MH 1200 mm - (RD-L-14)-Z4-L014-SW |  | 2027-04-22 → 2027-04-21 (-1d) |  | -137.02d → -137d |
| RHD4CZ4L014SW3200 | Installation of Base for MH 1200 mm - (RD-L-14)-Z4-L014-SW |  | 2027-04-28 → 2027-04-27 (-1d) |  | -137.02d → -137d |
| RHD4CZ4L014SW3300 | MH Ring and C.Slab works and Backfilling works for MH 1200 mm - (RD-L-14)-Z4-L014-SW |  | 2027-05-23 → 2027-05-22 (-1d) |  | -137.02d → -137d |
| RHD4CZ4L014SW3400 | Steel Cover for MH 1200 mm - (RD-L-14)-Z4-L014-SW |  | 2027-06-01 → 2027-05-31 (-1d) |  | -137.02d → -137d |
| RHD4CZ4L014SW3500 | Finishing, Benching, Testing works for MH 1200 mm - (RD-L-14)-Z4-L014-SW | 2027-06-02 → 2027-06-01 (-1d) | 2027-06-22 → 2027-06-20 (-2d) |  | -138.02d → -137d |
| 1325 | **RHD4-02-002-L014-(SW)-GRP Pipes - 300 mm diameter** |  | 2027-05-12 → 2027-05-11 (-1d) |  |  |
| RHD4CZ4L014SW1400 | Primary Test for GRP Pipe Line 300 mm - (RD-L-14)-Z4-L014-SW |  | 2027-04-21 → 2027-04-20 (-1d) |  | -115.02d → -115d |
| RHD4CZ4L014SW1500 | Backfilling and warning tape works for GRP Pipe Line 300 mm - (RD-L-14)-Z4-L014-SW |  | 2027-05-12 → 2027-05-11 (-1d) |  | -124.02d → -124d |
| 957 | **RHD4-02-002-L014-(SW)-MH Works - 1200 mm diameter with Back drop** |  | 2027-05-02 → 2027-05-01 (-1d) |  |  |
| RHD4CZ4L014SW3201 | Installation of Base for MH 1200 mm - (RD-L-14)-Z4-L014-SW |  | 2027-04-17 → 2027-04-15 (-2d) |  | -124.02d → -124d |
| RHD4CZ4L014SW3301 | MH Ring and C.Slab works and Backfilling works for MH 1200 mm - (RD-L-14)-Z4-L014-SW |  | 2027-04-22 → 2027-04-21 (-1d) |  | -124.02d → -124d |
| RHD4CZ4L014SW3401 | Steel Cover for MH 1200 mm - (RD-L-14)-Z4-L014-SW |  | 2027-04-26 → 2027-04-25 (-1d) |  | -124.02d → -124d |
| RHD4CZ4L014SW3501 | Finishing, Benching, Testing works for MH 1200 mm - (RD-L-14)-Z4-L014-SW |  | 2027-05-02 → 2027-05-01 (-1d) |  | -124.02d → -124d |
| 2466 | **RHD4-02-002-L014-(SW)-UPVC Pipes - 200 mm diameter** |  | 2027-04-25 → 2027-04-24 (-1d) |  |  |
| RHD4CZ4L014SW2100 | Excavation works for UPVC Pipe Line 200 mm - (RD-L-14)-Z4-L014-SW |  | 2027-04-13 → 2027-04-12 (-1d) |  | -123.02d → -123d |
| RHD4CZ4L014SW2200 | Bedding works for UPVC Pipe Line 200 mm - (RD-L-14)-Z4-L014-SW |  | 2027-04-15 → 2027-04-14 (-1d) |  | -123.02d → -123d |
| RHD4CZ4L014SW2300 | Installing for UPVC Pipe Line 200 mm - (RD-L-14)-Z4-L014-SW |  | 2027-04-19 → 2027-04-18 (-1d) |  | -123.02d → -123d |
| RHD4CZ4L014SW2500 | Backfilling and warning tape works for UPVC Pipe Line 200 mm - (RD-L-14)-Z4-L014-SW |  | 2027-04-25 → 2027-04-24 (-1d) |  | -123.02d → -123d |
| RHD4CZ4L014SW2400 | Primary Test for UPVC Pipe Line 200 mm - (RD-L-14)-Z4-L014-SW |  | 2027-04-21 → 2027-04-20 (-1d) |  | -123.02d → -123d |
| 2497 | **RHD4-02-002-Z4-L014-Potable Network - PT** | 2027-05-03 → 2027-05-01 (-2d) | 2027-08-05 → 2027-08-02 (-3d) |  |  |
| 2498 | **RHD4-02-002-L014-(PT)-HDPE Pipes - 110 mm diameter** | 2027-05-03 → 2027-05-01 (-2d) | 2027-05-19 → 2027-05-11 (-8d) |  |  |
| RHD4CZ4L014PT1100 | Excavation works for HDPE Pipline 110 mm - (RD-L-14)-Z4-L014-PT | 2027-05-03 → 2027-05-01 (-2d) | 2027-05-05 → 2027-05-02 (-3d) |  | -170.02d → -168d |
| RHD4CZ4L014PT1200 | Bedding works for HDPE Pipline 110 mm - (RD-L-14)-Z4-L014-PT | 2027-05-05 → 2027-05-03 (-2d) | 2027-05-08 → 2027-05-04 (-4d) |  | -128.02d → -126d |
| RHD4CZ4L014PT1300 | Installing for HDPE Pipline 110 mm - (RD-L-14)-Z4-L014-PT | 2027-05-08 → 2027-05-05 (-3d) | 2027-05-10 → 2027-05-06 (-4d) |  | -128.02d → -126d |
| RHD4CZ4L014PT1400 | Primary Test for HDPE Pipline 110 mm - (RD-L-14)-Z4-L014-PT | 2027-05-10 → 2027-05-08 (-2d) | 2027-05-12 → 2027-05-09 (-3d) |  | -128.02d → -126d |
| RHD4CZ4L014PT1500 | Backfilling and warning tape works for HDPE Pipline 110 mm - (RD-L-14)-Z4-L014-PT | 2027-05-12 → 2027-05-10 (-2d) | 2027-05-19 → 2027-05-11 (-8d) |  | -128.02d → -126d |
| 2499 | **RHD4-02-002-L014-(PT)-HDPE Pipes - 160 mm diameter** | 2027-05-05 → 2027-05-03 (-2d) | 2027-07-01 → 2027-06-28 (-3d) |  |  |
| RHD4CZ4L014PT1101 | Excavation works for HDPE Pipline 160 mm - (RD-L-14)-Z4-L014-PT | 2027-05-05 → 2027-05-03 (-2d) | 2027-05-20 → 2027-05-12 (-8d) |  | -149.02d → -147d |
| RHD4CZ4L014PT1201 | Bedding works for HDPE Pipline 160 mm - (RD-L-14)-Z4-L014-PT | 2027-05-20 → 2027-05-13 (-7d) | 2027-05-31 → 2027-05-27 (-4d) |  | -148.02d → -146d |
| RHD4CZ4L014PT1301 | Installing for HDPE Pipline 160 mm - (RD-L-14)-Z4-L014-PT | 2027-05-31 → 2027-05-29 (-2d) | 2027-06-10 → 2027-06-07 (-3d) |  | -148.02d → -146d |
| RHD4CZ4L014PT1401 | Primary Test for HDPE Pipline 160 mm - (RD-L-14)-Z4-L014-PT | 2027-06-10 → 2027-06-08 (-2d) | 2027-06-21 → 2027-06-17 (-4d) |  | -138.02d → -136d |
| RHD4CZ4L014PT1501 | Backfilling and warning tape works for HDPE Pipline 160 mm - (RD-L-14)-Z4-L014-PT | 2027-06-21 → 2027-06-19 (-2d) | 2027-07-01 → 2027-06-28 (-3d) |  | -138.02d → -136d |
| 2503 | **RHD4-02-002-L014-(PT)-Gate Valves (Direct Buried)** | 2027-06-07 → 2027-06-05 (-2d) | 2027-07-05 → 2027-07-01 (-4d) |  |  |
| RHD4CZ4L014PT3100 | Installation for Direct Buried Gate Valves - (RD-L-14)-Z4-L014-PT | 2027-06-07 → 2027-06-05 (-2d) | 2027-06-10 → 2027-06-07 (-3d) |  | -148.02d → -146d |

| ID | Task | Start | Finish | Total float |
| --- | --- | --- | --- | --- |
| RHD4CZ4L014PT3200 | Stem and Service box for Direct Buried Gate Valves - (RD-L-14)-Z4-L014-PT | 2027-07-01 → 2027-06-29 (-2d) | 2027-07-05 → 2027-07-01 (-4d) | -121.02d → -119d |
| 2506 | **RHD4-02-002-L014-(PT)-Wash out Valve Chambers** | 2027-05-05 → 2027-05-03 (-2d) | 2027-05-19 → 2027-05-11 (-8d) |  |
| RHD4CZ4L014PT2101 | Excavation and Bedding for Wash out Valve Chambers for Potable Water Network - (RD-L-14)-Z4-L014-PT | 2027-05-05 → 2027-05-03 (-2d) | 2027-05-08 → 2027-05-04 (-4d) | -149.02d → -147d |
| RHD4CZ4L014PT2201 | PC works for Wash out Valve Chambers for Potable Water Network - (RD-L-14)-Z4-L014-PT | 2027-05-08 → 2027-05-05 (-3d) | 2027-05-10 → 2027-05-06 (-4d) | -138.02d → -136d |
| RHD4CZ4L014PT2301 | Installation for Wash out Valve Chambers for Potable Water Network - (RD-L-14)-Z4-L014-PT | 2027-05-10 → 2027-05-08 (-2d) | 2027-05-12 → 2027-05-09 (-3d) | -138.02d → -136d |
| RHD4CZ4L014PT2401 | Backfilling works for Wash out Valve Chambers for Potable Water Network - (RD-L-14)-Z4-L014-PT | 2027-05-12 → 2027-05-10 (-2d) | 2027-05-19 → 2027-05-11 (-8d) | -138.02d → -136d |
| 2507 | **RHD4-02-002-L014-(PT)-Wash out Valves** | 2027-05-12 → 2027-05-10 (-2d) | 2027-05-22 → 2027-05-13 (-9d) |  |
| RHD4CZ4L014PT3102 | Installation for Wash out Valves for Potable Water Network - (RD-L-14)-Z4-L014-PT | 2027-05-12 → 2027-05-10 (-2d) | 2027-05-19 → 2027-05-11 (-8d) | -138.02d → -136d |
| RHD4CZ4L014PT3202 | Stem and Service box for Wash out Valves for Potable Water Network - (RD-L-14)-Z4-L014-PT | 2027-05-19 → 2027-05-12 (-7d) | 2027-05-22 → 2027-05-13 (-9d) | -138.02d → -136d |
| 2508 | **RHD4-02-002-L014-(PT)-Air Valve Chambers** | 2027-05-08 → 2027-05-05 (-3d) | 2027-05-22 → 2027-05-13 (-9d) |  |
| RHD4CZ4L014PT2102 | Excavation and Bedding for Air Valve Chambers for Potable Water Network - (RD-L-14)-Z4-L014-PT | 2027-05-08 → 2027-05-05 (-3d) | 2027-05-10 → 2027-05-06 (-4d) | -149.02d → -147d |
| RHD4CZ4L014PT2202 | PC works for Air Valve Chambers for Potable Water Network - (RD-L-14)-Z4-L014-PT | 2027-05-10 → 2027-05-08 (-2d) | 2027-05-12 → 2027-05-09 (-3d) | -149.02d → -147d |
| RHD4CZ4L014PT2302 | Installation for Air Valve Chambers for Potable Water Network - (RD-L-14)-Z4-L014-PT | 2027-05-12 → 2027-05-10 (-2d) | 2027-05-19 → 2027-05-11 (-8d) | -149.02d → -147d |
| RHD4CZ4L014PT2402 | Backfilling works for Air Valve Chambers for Potable Water Network - (RD-L-14)-Z4-L014-PT | 2027-05-19 → 2027-05-12 (-7d) | 2027-05-22 → 2027-05-13 (-9d) | -149.02d → -147d |
| 2509 | **RHD4-02-002-L014-(PT)-Air Valves** | 2027-05-19 → 2027-05-12 (-7d) | 2027-05-24 → 2027-05-20 (-4d) |  |
| RHD4CZ4L014PT3103 | Installation for Air Valves for Potable Water Network - (RD-L-14)-Z4-L014-PT | 2027-05-19 → 2027-05-12 (-7d) | 2027-05-22 → 2027-05-13 (-9d) | -149.02d → -147d |
| RHD4CZ4L014PT3203 | Stem and Service box for Air Valves for Potable Water Network - (RD-L-14)-Z4-L014-PT | 2027-05-22 → 2027-05-19 (-3d) | 2027-05-24 → 2027-05-20 (-4d) | -149.02d → -147d |
| 2510 | **RHD4-02-002-L014-(PT)-Fire Hydrant** | 2027-07-01 → 2027-06-29 (-2d) | 2027-08-05 → 2027-08-02 (-3d) |  |
| RHD4CZ4L014PT4100 | Excavation and Bedding and Pipe Installation for Fire Hydrant - (RD-L-14)-Z4-L014-PT | 2027-07-01 → 2027-06-29 (-2d) | 2027-07-11 → 2027-07-07 (-4d) | -138.02d → -136d |
| RHD4CZ4L014PT4200 | Valve Installation for Fire Hydrant - (RD-L-14)-Z4-L014-PT | 2027-07-11 → 2027-07-08 (-3d) | 2027-07-18 → 2027-07-14 (-4d) | -138.02d → -136d |
| RHD4CZ4L014PT4300 | Stem for Fire Hydrant - (RD-L-14)-Z4-L014-PT | 2027-07-18 → 2027-07-15 (-3d) | 2027-07-25 → 2027-07-21 (-4d) | -138.02d → -136d |
| RHD4CZ4L014PT4400 | Fire Installation for Fire Hydrant - (RD-L-14)-Z4-L014-PT | 2027-07-25 → 2027-07-22 (-3d) | 2027-08-01 → 2027-07-28 (-4d) | -138.02d → -136d |
| RHD4CZ4L014PT4500 | Protection Barriers for Fire Hydrant - (RD-L-14)-Z4-L014-PT | 2027-08-01 → 2027-07-29 (-3d) | 2027-08-05 → 2027-08-02 (-3d) | -138.02d → -136d |
| 2512 | **RHD4-02-002-Z4-L014-Irrigation Network - IRR** | 2027-05-05 → 2027-05-03 (-2d) | 2027-07-05 → 2027-07-01 (-4d) |  |
| 2513 | **RHD4-02-002-L014-(IRR)-HDPE Pipes - 160 mm diameter** | 2027-05-20 → 2027-05-13 (-7d) | 2027-06-13 → 2027-06-09 (-4d) |  |
| RHD4CZ4L014IRR1100 | Excavation works for HDPE Pipline 160 mm - (RD-L-14)-Z4-L014-IRR | 2027-05-20 → 2027-05-13 (-7d) | 2027-05-26 → 2027-05-23 (-3d) | -149.02d → -147d |
| RHD4CZ4L014IRR1200 | Bedding works for HDPE Pipline 160 mm - (RD-L-14)-Z4-L014-IRR | 2027-05-26 → 2027-05-24 (-2d) | 2027-05-31 → 2027-05-27 (-4d) | -149.02d → -147d |
| RHD4CZ4L014IRR1300 | Installing for HDPE Pipline 160 mm - (RD-L-14)-Z4-L014-IRR | 2027-05-31 → 2027-05-29 (-2d) | 2027-06-06 → 2027-06-02 (-4d) | -149.02d → -147d |
| RHD4CZ4L014IRR1400 | Primary Test for HDPE Pipline 160 mm - (RD-L-14)-Z4-L014-IRR | 2027-06-06 → 2027-06-03 (-3d) | 2027-06-08 → 2027-06-05 (-3d) | -149.02d → -147d |
| RHD4CZ4L014IRR1500 | Backfilling and warning tape works for HDPE Pipline 160 mm - (RD-L-14)-Z4-L014-IRR | 2027-06-08 → 2027-06-06 (-2d) | 2027-06-13 → 2027-06-09 (-4d) | -149.02d → -147d |
| 1770 | **RHD4-02-002-L014-(IRR)-Air Valves** | 2027-05-31 → 2027-05-29 (-2d) | 2027-06-05 → 2027-06-01 (-4d) |  |
| RHD4CZ4L014IRR3103 | Installation for Air Valves for Irrigation Network - (RD-L-14)-Z4-L014-IRR | 2027-05-31 → 2027-05-29 (-2d) | 2027-06-02 → 2027-05-30 (-3d) | -149.02d → -147d |
| RHD4CZ4L014IRR3203 | Stem and Service box for Air Valves for Irrigation Network - (RD-L-14)-Z4-L014-IRR | 2027-06-02 → 2027-05-31 (-2d) | 2027-06-05 → 2027-06-01 (-4d) | -149.02d → -147d |
| 2516 | **RHD4-02-002-L014-(IRR)-HDPE Pipes - 250 mm diameter** | 2027-05-05 → 2027-05-03 (-2d) | 2027-07-05 → 2027-07-01 (-4d) |  |
| RHD4CZ4L014IRR1103 | Excavation works for HDPE Pipline 250 mm - (RD-L-14)-Z4-L014-IRR | 2027-05-05 → 2027-05-03 (-2d) | 2027-05-22 → 2027-05-13 (-9d) | -170.02d → -168d |
| RHD4CZ4L014IRR1203 | Bedding works for HDPE Pipline 250 mm - (RD-L-14)-Z4-L014-IRR | 2027-05-22 → 2027-05-19 (-3d) | 2027-05-31 → 2027-05-27 (-4d) | -148.02d → -146d |
| RHD4CZ4L014IRR1303 | Installing for HDPE Pipline 250 mm - (RD-L-14)-Z4-L014-IRR | 2027-05-31 → 2027-05-29 (-2d) | 2027-06-12 → 2027-06-08 (-4d) | -148.02d → -146d |
| RHD4CZ4L014IRR1403 | Primary Test for HDPE Pipline 250 mm - (RD-L-14)-Z4-L014-IRR | 2027-06-16 → 2027-06-14 (-2d) | 2027-06-26 → 2027-06-22 (-4d) | -146.02d → -144d |
| RHD4CZ4L014IRR1503 | Backfilling and warning tape works for HDPE Pipline 250 mm - (RD-L-14)-Z4-L014-IRR | 2027-06-26 → 2027-06-23 (-3d) | 2027-07-05 → 2027-07-01 (-4d) | -146.02d → -144d |
| 2521 | **RHD4-02-002-L014-(IRR)-Gate Valves (Direct Buried)** | 2027-06-07 → 2027-06-05 (-2d) | 2027-06-17 → 2027-06-14 (-3d) |  |
| RHD4CZ4L014IRR3100 | Installation for Direct Buried Gate Valves - (RD-L-14)-Z4-L014-IRR | 2027-06-07 → 2027-06-05 (-2d) | 2027-06-12 → 2027-06-08 (-4d) | -148.02d → -146d |
| RHD4CZ4L014IRR3200 | Stem and Service box for Direct Buried Gate Valves - (RD-L-14)-Z4-L014-IRR | 2027-06-13 → 2027-06-10 (-3d) | 2027-06-17 → 2027-06-14 (-3d) | -149.02d → -147d |
| 2528 | **RHD4-02-002-L014-(IRR)-Concrete Encasement** | 2027-05-31 → 2027-05-29 (-2d) | 2027-06-16 → 2027-06-13 (-3d) |  |
| RHD4CZ4L014IRR5100 | Pipe Encasement for Irrigation Pipelines - (RD-L-14)-Z4-L014-IRR | 2027-05-31 → 2027-05-29 (-2d) | 2027-06-16 → 2027-06-13 (-3d) | -146.02d → -144d |
| 6685 | **RHD4-02-002-L014-(IRR)-Wash out Chamber** | 2027-05-22 → 2027-05-19 (-3d) | 2027-05-31 → 2027-05-27 (-4d) |  |
| RHD4CZ4L014IRR2101 | Excavation and Bedding for Wash out Chamber for Irrigation Network - (RD-L-14)-Z4-L014-IRR | 2027-05-22 → 2027-05-19 (-3d) | 2027-05-24 → 2027-05-20 (-4d) | -170.02d → -168d |
| RHD4CZ4L014IRR2201 | PC works for Wash out Chamber for Irrigation Network - (RD-L-14)-Z4-L014-IRR | 2027-05-24 → 2027-05-22 (-2d) | 2027-05-26 → 2027-05-23 (-3d) | -170.02d → -168d |
| RHD4CZ4L014IRR2301 | Installation for Wash out Chamber for Irrigation Network - (RD-L-14)-Z4-L014-IRR | 2027-05-26 → 2027-05-24 (-2d) | 2027-05-29 → 2027-05-25 (-4d) | -170.02d → -168d |
| RHD4CZ4L014IRR2401 | Backfilling works for Wash out Chamber for Irrigation Network - (RD-L-14)-Z4-L014-IRR | 2027-05-29 → 2027-05-26 (-3d) | 2027-05-31 → 2027-05-27 (-4d) | -170.02d → -168d |
| 6686 | **RHD4-02-002-L014-(IRR)-Wash out Valves** | 2027-05-29 → 2027-05-26 (-3d) | 2027-06-02 → 2027-05-30 (-3d) |  |
| RHD4CZ4L014IRR3102 | Installation for Wash out Valve for Irrigation Network - (RD-L-14)-Z4-L014-IRR | 2027-05-29 → 2027-05-26 (-3d) | 2027-05-31 → 2027-05-27 (-4d) | -138.02d → -136d |
| RHD4CZ4L014IRR3202 | Stem and Service box for Wash out Valve for Irrigation Network - (RD-L-14)-Z4-L014-IRR | 2027-05-31 → 2027-05-29 (-2d) | 2027-06-02 → 2027-05-30 (-3d) | -138.02d → -136d |
| 1769 | **RHD4-02-002-L014-(IRR)-Air Valve Chamber** | 2027-05-24 → 2027-05-22 (-2d) | 2027-06-02 → 2027-05-30 (-3d) |  |
| RHD4CZ4L014IRR2102 | Excavation and Bedding for Valve Chamber for Irrigation Network - (RD-L-14)-Z4-L014-IRR | 2027-05-24 → 2027-05-22 (-2d) | 2027-05-26 → 2027-05-23 (-3d) | -149.02d → -147d |
| RHD4CZ4L014IRR2202 | PC works for Valve Chamber for Irrigation Network - (RD-L-14)-Z4-L014-IRR | 2027-05-26 → 2027-05-24 (-2d) | 2027-05-29 → 2027-05-25 (-4d) | -149.02d → -147d |
| RHD4CZ4L014IRR2302 | Installation for Valve Chamber for Irrigation Network - (RD-L-14)-Z4-L014-IRR | 2027-05-29 → 2027-05-26 (-3d) | 2027-05-31 → 2027-05-27 (-4d) | -149.02d → -147d |
| RHD4CZ4L014IRR2402 | Backfilling works for Valve Chamber for Irrigation Network - (RD-L-14)-Z4-L014-IRR | 2027-05-31 → 2027-05-29 (-2d) | 2027-06-02 → 2027-05-30 (-3d) | -149.02d → -147d |
| 2546 | **RHD4-02-002-Z4-L014-Medium Voltage Network - MV** | 2027-05-31 → 2027-05-29 (-2d) | 2027-08-04 → 2027-08-01 (-3d) |  |
| 2547 | **RHD4-02-002-L014-(MV)-Medium Voltage cable trench** | 2027-05-31 → 2027-05-29 (-2d) | 2027-07-14 → 2027-07-11 (-3d) |  |
| RHD4CZ4L014MV1100 | Excavation for Medium Voltage Trench - (RD-L-14)-Z4-L014-MV | 2027-05-31 → 2027-05-29 (-2d) | 2027-06-09 → 2027-06-06 (-3d) | -170.02d → -168d |
| RHD4CZ4L014MV1200 | Trench Backfilling for Medium Voltage Network - (RD-L-14)-Z4-L014-MV | 2027-07-05 → 2027-07-03 (-2d) | 2027-07-14 → 2027-07-11 (-3d) | -170.02d → -168d |
| 2548 | **RHD4-02-002-L014-(MV)-Medium Voltage duct banks** | 2027-06-09 → 2027-06-07 (-2d) | 2027-06-23 → 2027-06-20 (-3d) |  |
| RHD4CZ4L014MV2100 | Excavation of Duct Banks for Medium Voltage Network - (RD-L-14)-Z4-L014-MV | 2027-06-09 → 2027-06-07 (-2d) | 2027-06-13 → 2027-06-09 (-4d) | -142.02d → -140d |
| RHD4CZ4L014MV2200 | Installation of Duct Banks for Medium Voltage Network - (RD-L-14)-Z4-L014-MV | 2027-06-13 → 2027-06-10 (-3d) | 2027-06-17 → 2027-06-14 (-3d) | -123.02d → -121d |
| RHD4CZ4L014MV2300 | Pouring of Duct Banks for Medium Voltage Network - (RD-L-14)-Z4-L014-MV | 2027-06-17 → 2027-06-15 (-2d) | 2027-06-21 → 2027-06-17 (-4d) | -123.02d → -121d |
| RHD4CZ4L014MV2400 | Backfilling of Duct Banks for Medium Voltage Network - (RD-L-14)-Z4-L014-MV | 2027-06-21 → 2027-06-19 (-2d) | 2027-06-23 → 2027-06-20 (-3d) | -123.02d → -121d |
| 2549 | **RHD4-02-002-L014-(MV)-Medium Voltage cables 3Cx 500 mm²** | 2027-06-09 → 2027-06-07 (-2d) | 2027-08-04 → 2027-08-01 (-3d) |  |
| RHD4CZ4L014MV3100 | Installation of Medium Voltage Cables 3Cx 500 mm² - (RD-L-14)-Z4-L014-MV | 2027-06-09 → 2027-06-07 (-2d) | 2027-06-28 → 2027-06-24 (-4d) | -170.02d → -168d |
| RHD4CZ4L014MV3200 | Joints Installation of Medium Voltage Cables 3Cx 500 mm² - (RD-L-14)-Z4-L014-MV | 2027-06-28 → 2027-06-26 (-2d) | 2027-07-05 → 2027-07-01 (-4d) | -170.02d → -168d |
| RHD4CZ4L014MV3300 | Testing of Medium Voltage Cables 3Cx 500 mm² - (RD-L-14)-Z4-L014-MV | 2027-07-14 → 2027-07-12 (-2d) | 2027-08-02 → 2027-07-29 (-4d) | -170.02d → -168d |

| ID | Task | Start | Finish | Total float |
| --- | --- | --- | --- | --- |
| RHD4CZ4L014MV3400 | Termination of Medium Voltage Cables 3Cx 500 mm² - (RD-L-14)-Z4-L014-MV | 2027-08-02 → 2027-07-31 (-2d) | 2027-08-04 → 2027-08-01 (-3d) | -170.02d → -168d |
| 2550 | **RHD4-02-002-L014-(MV)-Medium Voltage cables 3Cx 50 mm²** | 2027-06-09 → 2027-06-07 (-2d) | 2027-07-19 → 2027-07-15 (-4d) |  |
| RHD4CZ4L014MV3101 | Installation of Medium Voltage Cables 3Cx 50 mm² - (RD-L-14)-Z4-L014-MV | 2027-06-09 → 2027-06-07 (-2d) | 2027-06-12 → 2027-06-08 (-4d) | -150.02d → -148d |
| RHD4CZ4L014MV3301 | Testing of Medium Voltage Cables 3Cx 50 mm² - (RD-L-14)-Z4-L014-MV | 2027-07-14 → 2027-07-12 (-2d) | 2027-07-17 → 2027-07-13 (-4d) | -156.02d → -154d |
| RHD4CZ4L014MV3401 | Termination of Medium Voltage Cables 3Cx 50 mm² - (RD-L-14)-Z4-L014-MV | 2027-07-17 → 2027-07-14 (-3d) | 2027-07-19 → 2027-07-15 (-4d) | -156.02d → -154d |
| 2551 | **RHD4-02-002-L014-(MV)-Normally open Point (Outdoor Type)** | 2027-06-26 → 2027-06-23 (-3d) | 2027-06-30 → 2027-06-27 (-3d) |  |
| RHD4CZ4L014MV4100 | Installation for Normally open Point - (RD-L-14)-Z4-L014-MV | 2027-06-26 → 2027-06-23 (-3d) | 2027-06-28 → 2027-06-24 (-4d) | -158.02d → -156d |
| RHD4CZ4L014MV4200 | Termination for Normally open Point - (RD-L-14)-Z4-L014-MV | 2027-06-28 → 2027-06-26 (-2d) | 2027-06-30 → 2027-06-27 (-3d) | -158.02d → -156d |
| 2552 | **RHD4-02-002-L014-(MV)-Unit Substations** | 2027-07-14 → 2027-07-12 (-2d) | 2027-07-29 → 2027-07-26 (-3d) |  |
| RHD4CZ4L014MV5100 | Excavation for Unit Substations for Medium Voltage Network - (RD-L-14)-Z4-L014-MV | 2027-07-14 → 2027-07-12 (-2d) | 2027-07-17 → 2027-07-13 (-4d) | -154.02d → -152d |
| RHD4CZ4L014MV5200 | Concrete Base Placement for Unit Substations for Medium Voltage Network - (RD-L-14)-Z4-L014-MV | 2027-07-17 → 2027-07-14 (-3d) | 2027-07-19 → 2027-07-15 (-4d) | -154.02d → -152d |
| RHD4CZ4L014MV5300 | Installation for Fences and doors for Medium Voltage Network - (RD-L-14)-Z4-L014-MV | 2027-07-19 → 2027-07-17 (-2d) | 2027-07-25 → 2027-07-21 (-4d) | -154.02d → -152d |
| RHD4CZ4L014MV5400 | Installation for Unit Substations for Medium Voltage Network - (RD-L-14)-Z4-L014-MV | 2027-07-25 → 2027-07-22 (-3d) | 2027-07-29 → 2027-07-26 (-3d) | -154.02d → -152d |
| 2553 | **RHD4-02-002-Z4-L014-Low Voltage Network - LV** | 2027-06-13 → 2027-06-10 (-3d) | 2027-09-06 → 2027-09-02 (-4d) |  |
| 2554 | **RHD4-02-002-L014-(LV)-Low Voltage duct banks** | 2027-06-13 → 2027-06-10 (-3d) | 2027-07-03 → 2027-06-29 (-4d) |  |
| RHD4CZ4L014LV2100 | Excavation of Duct Banks for Low Voltage Network - (RD-L-14)-Z4-L014-LV | 2027-06-13 → 2027-06-10 (-3d) | 2027-06-17 → 2027-06-14 (-3d) | -142.02d → -140d |
| RHD4CZ4L014LV2200 | Installation of Duct Banks for Low Voltage Network - (RD-L-14)-Z4-L014-LV | 2027-06-17 → 2027-06-15 (-2d) | 2027-06-24 → 2027-06-21 (-3d) | -142.02d → -140d |
| RHD4CZ4L014LV2300 | Pouring of Duct Banks for Low Voltage Network - (RD-L-14)-Z4-L014-LV | 2027-06-24 → 2027-06-22 (-2d) | 2027-06-29 → 2027-06-26 (-3d) | -142.02d → -140d |
| RHD4CZ4L014LV2400 | Backfilling of Duct Banks for Low Voltage Network - (RD-L-14)-Z4-L014-LV | 2027-06-29 → 2027-06-27 (-2d) | 2027-07-03 → 2027-06-29 (-4d) | -142.02d → -140d |
| 2555 | **RHD4-02-002-L014-(LV)-Low Voltage Drawpit** | 2027-08-15 → 2027-08-12 (-3d) | 2027-08-19 → 2027-08-16 (-3d) |  |
| RHD4CZ4L014LV5100 | Excavation of Drawpit size 900x900x1000mm for Low Voltage Network - (RD-L-14)-Z4-L014-LV | 2027-08-15 → 2027-08-12 (-3d) | 2027-08-17 → 2027-08-14 (-3d) | -170.02d → -168d |
| RHD4CZ4L014LV5200 | Installation of Drawpit size 900x900x1000mm for Low Voltage Network - (RD-L-14)-Z4-L014-LV | 2027-08-17 → 2027-08-15 (-2d) | 2027-08-19 → 2027-08-16 (-3d) | -158.02d → -156d |
| 2556 | **RHD4-02-002-L014-(LV)-Low Voltage cables** | 2027-08-04 → 2027-08-02 (-2d) | 2027-09-06 → 2027-09-02 (-4d) |  |
| RHD4CZ4L014LV3100 | Excavation for Low Voltage Cables for Low Voltage Network - (RD-L-14)-Z4-L014-LV | 2027-08-04 → 2027-08-02 (-2d) | 2027-08-15 → 2027-08-11 (-4d) | -170.02d → -168d |
| RHD4CZ4L014LV3200 | Cable Laying of Low Voltage Cables for Low Voltage Network - (RD-L-14)-Z4-L014-LV | 2027-08-15 → 2027-08-12 (-3d) | 2027-08-23 → 2027-08-19 (-4d) | -145.02d → -143d |
| RHD4CZ4L014LV3300 | Warning tape and Backfill for Low Voltage Cables for Low Voltage Network - (RD-L-14)-Z4-L014-LV | 2027-08-23 → 2027-08-21 (-2d) | 2027-08-31 → 2027-08-28 (-3d) | -145.02d → -143d |
| RHD4CZ4L014LV3400 | Testing of Low Voltage Cables for Low Voltage Network - (RD-L-14)-Z4-L014-LV | 2027-08-31 → 2027-08-29 (-2d) | 2027-09-06 → 2027-09-02 (-4d) | -145.02d → -143d |
| 2559 | **RHD4-02-002-Z4-L014-Street Lighting Network - SL** | 2027-06-17 → 2027-06-15 (-2d) | 2027-11-08 → 2027-11-04 (-4d) |  |
| 2560 | **RHD4-02-002-L014-(SL)-Street Lighting duct banks** | 2027-06-17 → 2027-06-15 (-2d) | 2027-07-10 → 2027-07-06 (-4d) |  |
| RHD4CZ4L014SL2100 | Excavation of Duct Banks for Street Lighting Network - (RD-L-14)-Z4-L014-SL | 2027-06-17 → 2027-06-15 (-2d) | 2027-06-21 → 2027-06-17 (-4d) | -128.02d → -126d |
| RHD4CZ4L014SL2200 | Installation of Duct Banks for Street Lighting Network - (RD-L-14)-Z4-L014-SL | 2027-06-24 → 2027-06-22 (-2d) | 2027-06-29 → 2027-06-26 (-3d) | -131.02d → -129d |
| RHD4CZ4L014SL2300 | Pouring of Duct Banks for Street Lighting Network - (RD-L-14)-Z4-L014-SL | 2027-06-29 → 2027-06-27 (-2d) | 2027-07-03 → 2027-06-29 (-4d) | -131.02d → -129d |
| RHD4CZ4L014SL2400 | Backfilling of Duct Banks for Street Lighting Network - (RD-L-14)-Z4-L014-SL | 2027-07-03 → 2027-06-30 (-3d) | 2027-07-10 → 2027-07-06 (-4d) | -111.02d → -109d |
| 2561 | **RHD4-02-002-L014-(SL)-Street Lighting Drawpit** | 2027-08-17 → 2027-08-15 (-2d) | 2027-08-22 → 2027-08-18 (-4d) |  |
| RHD4CZ4L014SL5100 | Excavation of Drawpit size 600x600x900mm for Street Lighting Network - (RD-L-14)-Z4-L014-SL | 2027-08-17 → 2027-08-15 (-2d) | 2027-08-19 → 2027-08-16 (-3d) | -170.02d → -168d |
| RHD4CZ4L014SL5200 | Installation of Drawpit size 600x600x900mm for Street Lighting Network - (RD-L-14)-Z4-L014-SL | 2027-08-19 → 2027-08-17 (-2d) | 2027-08-22 → 2027-08-18 (-4d) | -158.02d → -156d |
| 2562 | **RHD4-02-002-L014-(SL)-Street Lighting cables** | 2027-08-17 → 2027-08-15 (-2d) | 2027-10-16 → 2027-10-12 (-4d) |  |
| RHD4CZ4L014SL3100 | Excavation for Street Lighting Cables for Street Lighting Network - (RD-L-14)-Z4-L014-SL | 2027-08-17 → 2027-08-15 (-2d) | 2027-09-05 → 2027-09-01 (-4d) | -170.02d → -168d |
| RHD4CZ4L014SL3200 | Cable Laying of Street Lighting Cables for Street Lighting Network - (RD-L-14)-Z4-L014-SL | 2027-09-05 → 2027-09-02 (-3d) | 2027-09-20 → 2027-09-16 (-4d) | -170.02d → -168d |
| RHD4CZ4L014SL3300 | Warning tape and Backfill for Street Lighting Cables for Street Lighting Network - (RD-L-14)-Z4-L014-SL | 2027-09-20 → 2027-09-18 (-2d) | 2027-10-06 → 2027-10-03 (-3d) | -170.02d → -168d |
| RHD4CZ4L014SL3400 | Testing of Street Lighting Cables for Street Lighting Network - (RD-L-14)-Z4-L014-SL | 2027-10-06 → 2027-10-04 (-2d) | 2027-10-16 → 2027-10-12 (-4d) | -170.02d → -168d |
| 2563 | **RHD4-02-002-L014-(SL)-Street Lighting Poles** | 2027-07-14 → 2027-07-12 (-2d) | 2027-11-08 → 2027-11-04 (-4d) |  |
| RHD4CZ4L014SL1100 | Excavation for RC Base for Lighting Poles for Street Lighting Network - (RD-L-14)-Z4-L014-SL | 2027-07-14 → 2027-07-12 (-2d) | 2027-07-24 → 2027-07-20 (-4d) | -115.02d → -113d |
| RHD4CZ4L014SL1200 | Installation for RC Base for Lighting Poles for Street Lighting Network - (RD-L-14)-Z4-L014-SL | 2027-07-24 → 2027-07-21 (-3d) | 2027-08-02 → 2027-07-29 (-4d) | -115.02d → -113d |
| RHD4CZ4L014SL1300 | Backfill for RC Base for Lighting Poles for Street Lighting Network - (RD-L-14)-Z4-L014-SL | 2027-08-25 → 2027-08-22 (-3d) | 2027-09-04 → 2027-08-30 (-5d) | -135.02d → -132d |
| RHD4CZ4L014SL1400 | Installation for Lighting Poles for Street Lighting Network - (RD-L-14)-Z4-L014-SL | 2027-10-16 → 2027-10-13 (-3d) | 2027-10-30 → 2027-10-26 (-4d) | -170.02d → -168d |
| RHD4CZ4L014SL1500 | Luminaire Installation for Lighting Poles for Street Lighting Network - (RD-L-14)-Z4-L014-SL | 2027-10-30 → 2027-10-27 (-3d) | 2027-11-08 → 2027-11-04 (-4d) | -170.02d → -168d |
| 2564 | **RHD4-02-002-L014-(SL)-Street Lighting Feeder Pillars** | 2027-10-06 → 2027-10-04 (-2d) | 2027-11-01 → 2027-10-28 (-4d) |  |
| RHD4CZ4L014SL4100 | Leveling for Distribution Pillars for Street Lighting Network - (RD-L-14)-Z4-L014-SL | 2027-10-06 → 2027-10-04 (-2d) | 2027-10-09 → 2027-10-05 (-4d) | -150.02d → -148d |
| RHD4CZ4L014SL4200 | Lean Concrete for Distribution Pillars for Street Lighting Network - (RD-L-14)-Z4-L014-SL | 2027-10-09 → 2027-10-06 (-3d) | 2027-10-11 → 2027-10-07 (-4d) | -150.02d → -148d |
| RHD4CZ4L014SL4300 | Installation of Distribution Pillars for Street Lighting Network - (RD-L-14)-Z4-L014-SL | 2027-10-30 → 2027-10-27 (-3d) | 2027-11-01 → 2027-10-28 (-4d) | -166.02d → -164d |
| 2565 | **RHD4-02-002-L014-(SL)-Street Lighting Earthing System** | 2027-11-01 → 2027-10-30 (-2d) | 2027-11-03 → 2027-10-31 (-3d) |  |
| RHD4CZ4L014SL6100 | Installation of Earthing for Lighting Poles and Fedder Pillers for Street Lighting Network - (RD-L-14)-Z4-L014-SL | 2027-11-01 → 2027-10-30 (-2d) | 2027-11-03 → 2027-10-31 (-3d) | -166.02d → -164d |
| 2571 | **RHD4-02-002-Z4-L014-Telecommunications Network - TC** | 2027-02-02 → 2027-02-09 (+7d) | 2027-11-29 → 2027-11-25 (-4d) |  |
| 2572 | **RHD4-02-002-L014-(TC)-Telecommunications Ducts** | 2027-10-06 → 2027-10-04 (-2d) | 2027-11-29 → 2027-11-25 (-4d) |  |
| RHD4CZ4L014TC2100 | Excavation of HDPE Ducts for Telecom Network - (RD-L-14)-Z4-L014-TC | 2027-10-06 → 2027-10-04 (-2d) | 2027-10-20 → 2027-10-17 (-3d) | -127.02d → -125d |
| RHD4CZ4L014TC2200 | Installation of HDPE Ducts for Telecom Network - (RD-L-14)-Z4-L014-TC | 2027-10-20 → 2027-10-18 (-2d) | 2027-11-03 → 2027-10-31 (-3d) | -117.02d → -115d |
| RHD4CZ4L014TC2400 | Backfilling of HDPE Ducts for Telecom Network - (RD-L-14)-Z4-L014-TC | 2027-11-15 → 2027-11-13 (-2d) | 2027-11-29 → 2027-11-25 (-4d) | -127.02d → -125d |
| 2573 | **RHD4-02-002-L014-(TC)-Telecommunications Manholes** | 2027-10-20 → 2027-10-18 (-2d) | 2027-11-15 → 2027-11-11 (-4d) |  |
| RHD4CZ4L014TC5100 | Excavation for Manholes for Telecom Network - (RD-L-14)-Z4-L014-TC | 2027-10-20 → 2027-10-18 (-2d) | 2027-11-02 → 2027-10-30 (-3d) | -127.02d → -125d |
| RHD4CZ4L014TC5200 | Installation of Manholes for Telecom Network - (RD-L-14)-Z4-L014-TC | 2027-11-02 → 2027-10-31 (-2d) | 2027-11-15 → 2027-11-11 (-4d) | -127.02d → -125d |
| 2574 | **RHD4-02-002-L014-(TC)-Telecomminications Road Crossings** | 2027-02-02 → 2027-02-09 (+7d) | 2027-02-21 → 2027-03-01 (+8d) |  |
| RHD4CZ4L014TC3100 | Excavation for Road Crossings for Telecom Network - (RD-L-14)-Z4-L014-TC | 2027-02-02 → 2027-02-09 (+7d) | 2027-02-03 → 2027-02-10 (+7d) | -173d → -179d |
| RHD4CZ4L014TC3200 | Installation of Road Crossings for Telecom Network - (RD-L-14)-Z4-L014-TC | 2027-02-04 → 2027-02-11 (+7d) | 2027-02-06 → 2027-02-13 (+7d) | -173d → -179d |
| RHD4CZ4L014TC3300 | Pouring of Road Crossings for Telecom Network - (RD-L-14)-Z4-L014-TC | 2027-02-07 → 2027-02-14 (+7d) | 2027-02-13 → 2027-02-20 (+7d) | -173d → -179d |
| RHD4CZ4L014TC3400 | Backfilling of Road Crossings for Telecom Network - (RD-L-14)-Z4-L014-TC | 2027-02-14 → 2027-02-21 (+7d) | 2027-02-21 → 2027-03-01 (+8d) | -173d → -179d |
| 2575 | **RHD4-02-002-Z4-L014-Information and Communication Technologies - ICT** | 2027-02-02 → 2027-02-09 (+7d) | 2027-12-01 → 2027-11-28 (-3d) |  |
| 2576 | **RHD4-02-002-L014-(ICT)-Information and Communication Technologies Ducts** | 2027-10-06 → 2027-10-04 (-2d) | 2027-12-01 → 2027-11-28 (-3d) |  |
| RHD4CZ4L014ICT2100 | Excavation of HDPE Ducts for ICT Network - (RD-L-14)-Z4-L014-ICT | 2027-10-06 → 2027-10-04 (-2d) | 2027-10-20 → 2027-10-17 (-3d) | -129.02d → -127d |
| RHD4CZ4L014ICT2200 | Installation of HDPE Ducts for ICT Network - (RD-L-14)-Z4-L014-ICT | 2027-10-20 → 2027-10-18 (-2d) | 2027-11-03 → 2027-10-31 (-3d) | -117.02d → -115d |

| ID | Task | Start | Finish | Complete | Total float |
| --- | --- | --- | --- | --- | --- |
| RHD4CZ4L014ICT2400 | Backfilling of HDPE Ducts for ICT Network - (RD-L-14)-Z4-L014-ICT | 2027-11-17 → 2027-11-15 (-2d) | 2027-12-01 → 2027-11-28 (-3d) |  | -129.02d → -127d |
| 2577 | **RHD4-02-002-L014-(ICT)-Information and Communication Technologies Manholes** | 2027-10-20 → 2027-10-18 (-2d) | 2027-11-17 → 2027-11-14 (-3d) |  |  |
| RHD4CZ4L014ICT5100 | Excavation for Manholes for ICT Network - (RD-L-14)-Z4-L014-ICT | 2027-10-20 → 2027-10-18 (-2d) | 2027-11-03 → 2027-10-31 (-3d) |  | -129.02d → -127d |
| RHD4CZ4L014ICT5200 | Installation of Manholes for ICT Network - (RD-L-14)-Z4-L014-ICT | 2027-11-03 → 2027-11-01 (-2d) | 2027-11-17 → 2027-11-14 (-3d) |  | -129.02d → -127d |
| 2578 | **RHD4-02-002-L014-(ICT)-Information and Communication Technologies Road Crossings** | 2027-02-02 → 2027-02-09 (+7d) | 2027-03-08 → 2027-03-15 (+7d) |  |  |
| RHD4CZ4L014ICT3100 | Excavation for Road Crossings for ICT Network - (RD-L-14)-Z4-L014-ICT | 2027-02-02 → 2027-02-09 (+7d) | 2027-02-09 → 2027-02-16 (+7d) |  | -182d → -188d |
| RHD4CZ4L014ICT3200 | Installation of Road Crossings for ICT Network - (RD-L-14)-Z4-L014-ICT | 2027-02-14 → 2027-02-17 (+3d) | 2027-02-21 → 2027-02-25 (+4d) |  | -185d → -188d |
| RHD4CZ4L014ICT3300 | Pouring of Road Crossings for ICT Network - (RD-L-14)-Z4-L014-ICT | 2027-02-23 → 2027-02-27 (+4d) | 2027-03-02 → 2027-03-06 (+4d) |  | -185d → -188d |
| RHD4CZ4L014ICT3400 | Backfilling of Road Crossings for ICT Network - (RD-L-14)-Z4-L014-ICT | 2027-03-03 → 2027-03-07 (+4d) | 2027-03-08 → 2027-03-15 (+7d) |  | -185d → -188d |
| 2579 | **RHD4-02-002-Z4-L014-Security Network - CCTV** | 2027-12-01 → 2027-11-29 (-2d) | 2028-01-15 → 2028-01-11 (-4d) |  |  |
| 2580 | **RHD4-02-002-L014-(CCTV)-Civil Works** | 2027-12-01 → 2027-11-29 (-2d) | 2027-12-13 → 2027-12-09 (-4d) |  |  |
| RHD4CZ4L014CCTV2100 | Civil Works for Security Network - (RD-L-14)-Z4-L014-CCTV | 2027-12-01 → 2027-11-29 (-2d) | 2027-12-13 → 2027-12-09 (-4d) |  | -129.02d → -127d |
| 2581 | **RHD4-02-002-L014-(CCTV)-CCTV Poles** | 2027-12-13 → 2027-12-11 (-2d) | 2027-12-25 → 2027-12-21 (-4d) |  |  |
| RHD4CZ4L014CCTV1100 | Excavation for RC Base for CCTV Poles for Security Network - (RD-L-14)-Z4-L014-CCTV | 2027-12-13 → 2027-12-11 (-2d) | 2027-12-15 → 2027-12-12 (-3d) |  | -129.02d → -127d |
| RHD4CZ4L014CCTV1200 | Installation for RC Base for CCTV Poles for Security Network - (RD-L-14)-Z4-L014-CCTV | 2027-12-15 → 2027-12-13 (-2d) | 2027-12-18 → 2027-12-14 (-4d) |  | -129.02d → -127d |
| RHD4CZ4L014CCTV1300 | Backfill for RC Base for CCTV Poles for Security Network - (RD-L-14)-Z4-L014-CCTV | 2027-12-18 → 2027-12-15 (-3d) | 2027-12-20 → 2027-12-16 (-4d) |  | -129.02d → -127d |
| RHD4CZ4L014CCTV1400 | Installation for CCTV Poles for Security Network - (RD-L-14)-Z4-L014-CCTV | 2027-12-20 → 2027-12-18 (-2d) | 2027-12-22 → 2027-12-19 (-3d) |  | -129.02d → -127d |
| RHD4CZ4L014CCTV1500 | Protection post Installation for CCTV Poles for Security Network - (RD-L-14)-Z4-L014-CCTV | 2027-12-22 → 2027-12-20 (-2d) | 2027-12-25 → 2027-12-21 (-4d) |  | -129.02d → -127d |
| 2582 | **RHD4-02-002-L014-(CCTV)-Camera** | 2027-12-25 → 2027-12-22 (-3d) | 2027-12-27 → 2027-12-23 (-4d) |  |  |
| RHD4CZ4L014CCTV3100 | Installation for Cameras for Security Network - (RD-L-14)-Z4-L014-CCTV | 2027-12-25 → 2027-12-22 (-3d) | 2027-12-27 → 2027-12-23 (-4d) |  | -100.02d → -98d |
| 2583 | **RHD4-02-002-L014-(CCTV)-Power and Infrastructure** | 2027-12-22 → 2027-12-20 (-2d) | 2027-12-27 → 2027-12-23 (-4d) |  |  |
| RHD4CZ4L014CCTV4100 | Installation of Power outlet, UPS and midspan for PTZ Camerafor Cameras for Security Network - (RD-L-14)-Z4-L014-CCTV | 2027-12-22 → 2027-12-20 (-2d) | 2027-12-25 → 2027-12-21 (-4d) |  | -129.02d → -127d |
| RHD4CZ4L014CCTV4200 | Short Range Wireless PoP wireless Bridgefor CCTV Poles for Security Network - (RD-L-12/2)-Z3-L122-CCTV | 2027-12-25 → 2027-12-22 (-3d) | 2027-12-27 → 2027-12-23 (-4d) |  | -100.02d → -98d |
| 2585 | **RHD4-02-002-L014-(CCTV)-CCTV Panels and Components** | 2027-12-27 → 2027-12-25 (-2d) | 2028-01-15 → 2028-01-11 (-4d) |  |  |
| RHD4CZ4L014CCTV6100 | Installation for CCTV Panels for Security Network - (RD-L-14)-Z4-L014-CCTV | 2027-12-27 → 2027-12-25 (-2d) | 2028-01-15 → 2028-01-11 (-4d) |  | -100.02d → -98d |
| 2596 | **RHD4-02-002-Z4-L09** |  | 2027-12-27 → 2027-12-23 (-4d) |  |  |
| 2775 | **RHD4-02-002-Z4-L09-Road Works - RD** | 2027-02-21 → 2027-02-20 (-1d) | 2027-12-27 → 2027-12-23 (-4d) |  |  |
| 2776 | **RHD4-02-002-L09-(RD)-Subgrade** | 2027-02-21 → 2027-02-20 (-1d) | 2027-03-07 → 2027-03-04 (-3d) |  |  |
| RHD4CZ4L09RD1100 | Supply, lay and compaction subgrade compacted thickness 300 mm for Roads - (RD-L-9)-Z4-L09-RD | 2027-02-21 → 2027-02-20 (-1d) | 2027-03-07 → 2027-03-04 (-3d) |  | -156.02d → -155d |
| 2777 | **RHD4-02-002-L09-(RD)-Aggregate Base Course** | 2027-03-07 → 2027-03-06 (-1d) | 2027-03-23 → 2027-03-21 (-2d) |  |  |
| RHD4CZ4L09RD2100 | Supply, lay and compaction Aggregate base course compacted thickness 300 mmfor Roads - (RD-L-9)-Z4-L09-RD | 2027-03-07 → 2027-03-06 (-1d) | 2027-03-23 → 2027-03-21 (-2d) |  | -156.02d → -155d |
| 2778 | **RHD4-02-002-L09-(RD)-Bituminous base course Two Layers, including (MC1)&(RC2)** | 2027-04-05 → 2027-04-04 (-1d) | 2027-11-08 → 2027-11-04 (-4d) |  |  |
| RHD4CZ4L09RD3100 | Supply, lay and Asphaltic base course including Prime Coat (MC1) for 1st Layer - (RD-L-9)-Z4-L09-RD | 2027-04-05 → 2027-04-04 (-1d) | 2027-04-07 → 2027-04-05 (-2d) |  | -167.02d → -166d |
| RHD4CZ4L09RD3200 | Supply, lay and Asphaltic base course including Tack Coat (RC2) for 2nd Layer - (RD-L-9)-Z4-L09-RD | 2027-11-06 → 2027-11-03 (-3d) | 2027-11-08 → 2027-11-04 (-4d) |  | -197.02d → -195d |
| 2780 | **RHD4-02-002-L09-(RD)-Precast Concrete Curb** | 2027-11-08 → 2027-11-06 (-2d) | 2027-11-21 → 2027-11-17 (-4d) |  |  |
| RHD4CZ4L09RD5100 | Supply and installation Precast Concrete Kerb for Roads - (RD-L-9)-Z4-L09-RD | 2027-11-08 → 2027-11-06 (-2d) | 2027-11-21 → 2027-11-17 (-4d) |  | -197.02d → -195d |
| 2783 | **RHD4-02-002-L09-(RD)-Traffic Signage** | 2027-11-21 → 2027-11-18 (-3d) | 2027-11-30 → 2027-11-27 (-3d) |  |  |
| RHD4CZ4L09RD8100 | Installation of Traffic Signage for Road Network - (RD-L-9)-Z4-L09-RD | 2027-11-21 → 2027-11-18 (-3d) | 2027-11-30 → 2027-11-27 (-3d) |  | -197.02d → -195d |
| 2781 | **RHD4-02-002-L09-(RD)-Precast Interlocking Block Pavers** | 2027-11-30 → 2027-11-28 (-2d) | 2027-12-20 → 2027-12-16 (-4d) |  |  |
| RHD4CZ4L09RD6100 | Interlocking block pavers for sidewalk-footpath for Side walks and Parking areas - (RD-L-9)-Z4-L09-RD | 2027-11-30 → 2027-11-28 (-2d) | 2027-12-20 → 2027-12-16 (-4d) |  | -197.02d → -195d |
| 2779 | **RHD4-02-002-L09-(RD)-Bituminous concrete wearing course including tack coat (RC2)** | 2027-12-20 → 2027-12-18 (-2d) | 2027-12-22 → 2027-12-19 (-3d) |  |  |
| RHD4CZ4L09RD4100 | Supply, lay and compaction Asphaltic wearing course including tack Coat (RC2)for Road Network - (RD-L-9)-Z4-L09-RD | 2027-12-20 → 2027-12-18 (-2d) | 2027-12-22 → 2027-12-19 (-3d) |  | -197.02d → -195d |
| 2782 | **RHD4-02-002-L09-(RD)-Pavement Marking** | 2027-12-22 → 2027-12-20 (-2d) | 2027-12-27 → 2027-12-23 (-4d) |  |  |
| RHD4CZ4L09RD7100 | Pavement Markings for Road Network - (RD-L-9)-Z4-L09-RD | 2027-12-22 → 2027-12-20 (-2d) | 2027-12-27 → 2027-12-23 (-4d) |  | -197.02d → -195d |
| 2600 | **RHD4-02-002-Z4-L09-Storm Network - ST** |  | 2027-05-24 → 2027-05-20 (-4d) |  |  |
| 8104 | **RHD4-02-002-L09-(ST)-MH Works - 2000 mm diameter** |  | 2027-02-21 → 2027-02-18 (-3d) |  |  |
| RHD4CZ4L09ST3102 | Excavation and PC Blinding works for MH 2000 mm - (RD-L-9)-Z4-L09-ST |  | 2027-02-11 → 2027-02-09 (-2d) |  | -189.02d → -188d |
| RHD4CZ4L09ST3202 | Installation of Base for MH 2000 mm - (RD-L-9)-Z4-L09-ST |  | 2027-02-14 → 2027-02-11 (-3d) |  | -184.02d → -183d |
| RHD4CZ4L09ST3302 | MH Ring and C.Slab works and Backfilling works for MH 2000 mm - (RD-L-9)-Z4-L09-ST |  | 2027-02-16 → 2027-02-14 (-2d) |  | -184.02d → -183d |
| RHD4CZ4L09ST3402 | Steel Cover for MH 2000 mm - (RD-L-9)-Z4-L09-ST | 2027-02-16 → 2027-02-15 (-1d) | 2027-02-18 → 2027-02-16 (-2d) |  | -184.02d → -183d |
| RHD4CZ4L09ST3502 | Finishing, Benching, Testing works for MH 2000 mm - (RD-L-9)-Z4-L09-ST | 2027-02-18 → 2027-02-17 (-1d) | 2027-02-21 → 2027-02-18 (-3d) |  | -184.02d → -183d |
| 8092 | **RHD4-02-002-L09-(ST)-GRP Pipes - 1000 mm diameter** |  | 2027-04-04 → 2027-03-31 (-4d) |  |  |
| RHD4CZ4L09ST1106 | Excavation works for GRP Pipe Line 1000 mm - (RD-L-9)-Z4-L09-ST |  | 2027-03-25 → 2027-03-22 (-3d) |  | -197.02d → -195d |
| RHD4CZ4L09ST1206 | Bedding works for GRP Pipe Line 1000 mm - (RD-L-9)-Z4-L09-ST |  | 2027-03-28 → 2027-03-24 (-4d) |  | -177.02d → -175d |
| RHD4CZ4L09ST1306 | Installing for GRP Pipe Line 1000 mm - (RD-L-9)-Z4-L09-ST |  | 2027-03-30 → 2027-03-27 (-3d) |  | -177.02d → -175d |
| RHD4CZ4L09ST1406 | Primary Test for GRP Pipe Line 1000 mm - (RD-L-9)-Z4-L09-ST | 2027-03-30 → 2027-03-28 (-2d) | 2027-04-01 → 2027-03-29 (-3d) |  | -177.02d → -175d |
| RHD4CZ4L09ST1506 | Backfilling and warning tape works for GRP Pipe Line 1000 mm - (RD-L-9)-Z4-L09-ST | 2027-04-01 → 2027-03-30 (-2d) | 2027-04-04 → 2027-03-31 (-4d) |  | -177.02d → -175d |
| 2413 | **RHD4-02-002-L09-(ST)-GRP Pipes - 500 mm diameter** | 2027-03-25 → 2026-11-12 (-133d) | 2027-04-06 → 2027-04-03 (-3d) |  |  |
| RHD4CZ4L09ST1101 | Excavation works for GRP Pipe Line 500 mm - (RD-L-9)-Z4-L09-ST | 2027-03-25 → 2026-11-12 A (-133d) | 2027-03-28 → 2027-03-24 (-4d) | 0% → 30% | -197.02d → -195d |
| RHD4CZ4L09ST1201 | Bedding works for GRP Pipe Line 500 mm - (RD-L-9)-Z4-L09-ST | 2027-03-28 → 2027-03-25 (-3d) | 2027-03-30 → 2027-03-27 (-3d) |  | -197.02d → -195d |
| RHD4CZ4L09ST1301 | Installing for GRP Pipe Line 500 mm - (RD-L-9)-Z4-L09-ST | 2027-03-30 → 2027-03-28 (-2d) | 2027-04-01 → 2027-03-29 (-3d) |  | -197.02d → -195d |
| RHD4CZ4L09ST1401 | Primary Test for GRP Pipe Line 500 mm - (RD-L-9)-Z4-L09-ST | 2027-04-01 → 2027-03-30 (-2d) | 2027-04-04 → 2027-03-31 (-4d) |  | -197.02d → -195d |
| RHD4CZ4L09ST1501 | Backfilling and warning tape works for GRP Pipe Line 500 mm - (RD-L-9)-Z4-L09-ST | 2027-04-04 → 2027-04-01 (-3d) | 2027-04-06 → 2027-04-03 (-3d) |  | -197.02d → -195d |
| 2617 | **RHD4-02-002-L09-(ST)-MH Works - 1200 mm diameter** |  | 2027-04-18 → 2027-04-14 (-4d) |  |  |
| RHD4CZ4L09ST3100 | Excavation and PC Blinding works for MH 1200 mm - (RD-L-9)-Z4-L09-ST |  | 2027-04-08 → 2027-04-05 (-3d) |  | -197.02d → -195d |
| RHD4CZ4L09ST3200 | Installation of Base for MH 1200 mm - (RD-L-9)-Z4-L09-ST | 2027-04-08 → 2027-04-06 (-2d) | 2027-04-11 → 2027-04-07 (-4d) |  | -197.02d → -195d |
| RHD4CZ4L09ST3300 | MH Ring and C.Slab works and Backfilling works for MH 1200 mm - (RD-L-9)-Z4-L09-ST | 2027-04-11 → 2027-04-08 (-3d) | 2027-04-13 → 2027-04-10 (-3d) |  | -162.02d → -158d |
| RHD4CZ4L09ST3400 | Steel Cover for MH 1200 mm - (RD-L-9)-Z4-L09-ST | 2027-04-13 → 2027-04-11 (-2d) | 2027-04-15 → 2027-04-12 (-3d) |  | -152.02d → -150d |
| RHD4CZ4L09ST3500 | Finishing, Benching, Testing works for MH 1200 mm - (RD-L-9)-Z4-L09-ST | 2027-04-15 → 2027-04-13 (-2d) | 2027-04-18 → 2027-04-14 (-4d) |  | -146.02d → -144d |
| 2618 | **RHD4-02-002-L09-(ST)-MH Works - 1500 mm diameter** |  | 2027-05-24 → 2027-05-20 (-4d) |  |  |

| ID | Task | Start | Finish | Complete | Total float |
| --- | --- | --- | --- | --- | --- |
| RHD4CZ4L09ST3101 | Excavation and PC Blinding works for MH 1500 mm - (RD-L-9)-Z4-L09-ST |  | 2027-04-11 → 2027-04-07 (-4d) | 42% → 47% | -166.02d → -164d |
| RHD4CZ4L09ST3201 | Installation of Base for MH 1500 mm - (RD-L-9)-Z4-L09-ST |  | 2027-04-21 → 2027-04-18 (-3d) |  | -166.02d → -164d |
| RHD4CZ4L09ST3301 | MH Ring and C.Slab works and Backfilling works for MH 1500 mm - (RD-L-9)-Z4-L09-ST | 2027-04-21 → 2027-04-19 (-2d) | 2027-05-02 → 2027-04-28 (-4d) |  | -166.02d → -164d |
| RHD4CZ4L09ST3401 | Steel Cover for MH 1500 mm - (RD-L-9)-Z4-L09-ST | 2027-05-02 → 2027-04-29 (-3d) | 2027-05-09 → 2027-05-05 (-4d) |  | -166.02d → -164d |
| RHD4CZ4L09ST3501 | Finishing, Benching, Testing works for MH 1500 mm - (RD-L-9)-Z4-L09-ST | 2027-05-09 → 2027-05-06 (-3d) | 2027-05-24 → 2027-05-20 (-4d) |  | -166.02d → -164d |
| 2606 | **RHD4-02-002-L09-(ST)-GRP Pipes - 900 mm diameter** | 2027-04-11 → 2027-04-08 (-3d) | 2027-04-22 → 2027-04-19 (-3d) |  |  |
| RHD4CZ4L09ST1105 | Excavation works for GRP Pipe Line 900 mm - (RD-L-9)-Z4-L09-ST | 2027-04-11 → 2027-04-08 (-3d) | 2027-04-13 → 2027-04-10 (-3d) |  | -197.02d → -195d |
| RHD4CZ4L09ST1205 | Bedding works for GRP Pipe Line 900 mm - (RD-L-9)-Z4-L09-ST | 2027-04-13 → 2027-04-11 (-2d) | 2027-04-15 → 2027-04-12 (-3d) |  | -197.02d → -195d |
| RHD4CZ4L09ST1305 | Installing for GRP Pipe Line 900 mm - (RD-L-9)-Z4-L09-ST | 2027-04-15 → 2027-04-13 (-2d) | 2027-04-18 → 2027-04-14 (-4d) |  | -197.02d → -195d |
| RHD4CZ4L09ST1405 | Primary Test for GRP Pipe Line 900 mm - (RD-L-9)-Z4-L09-ST | 2027-04-18 → 2027-04-15 (-3d) | 2027-04-20 → 2027-04-17 (-3d) |  | -197.02d → -195d |
| RHD4CZ4L09ST1505 | Backfilling and warning tape works for GRP Pipe Line 900 mm - (RD-L-9)-Z4-L09-ST | 2027-04-20 → 2027-04-18 (-2d) | 2027-04-22 → 2027-04-19 (-3d) |  | -197.02d → -195d |
| 2605 | **RHD4-02-002-L09-(ST)-GRP Pipes - 800 mm diameter** |  | 2027-04-25 → 2027-04-21 (-4d) |  |  |
| RHD4CZ4L09ST1104 | Excavation works for GRP Pipe Line 800 mm - (RD-L-9)-Z4-L09-ST |  | 2027-04-15 → 2027-04-12 (-3d) |  | -197.02d → -195d |
| RHD4CZ4L09ST1204 | Bedding works for GRP Pipe Line 800 mm - (RD-L-9)-Z4-L09-ST | 2027-04-15 → 2027-04-13 (-2d) | 2027-04-18 → 2027-04-14 (-4d) |  | -197.02d → -195d |
| RHD4CZ4L09ST1304 | Installing for GRP Pipe Line 800 mm - (RD-L-9)-Z4-L09-ST | 2027-04-18 → 2027-04-15 (-3d) | 2027-04-20 → 2027-04-17 (-3d) |  | -197.02d → -195d |
| RHD4CZ4L09ST1404 | Primary Test for GRP Pipe Line 800 mm - (RD-L-9)-Z4-L09-ST | 2027-04-20 → 2027-04-18 (-2d) | 2027-04-22 → 2027-04-19 (-3d) |  | -197.02d → -195d |
| RHD4CZ4L09ST1504 | Backfilling and warning tape works for GRP Pipe Line 800 mm - (RD-L-9)-Z4-L09-ST | 2027-04-22 → 2027-04-20 (-2d) | 2027-04-25 → 2027-04-21 (-4d) |  | -197.02d → -195d |
| 2604 | **RHD4-02-002-L09-(ST)-GRP Pipes - 700 mm diameter** | 2027-04-11 → 2026-11-12 (-150d) | 2027-04-27 → 2027-04-24 (-3d) |  |  |
| RHD4CZ4L09ST1103 | Excavation works for GRP Pipe Line 700 mm - (RD-L-9)-Z4-L09-ST | 2027-04-11 → 2026-11-12 A (-150d) | 2027-04-13 → 2027-04-10 (-3d) | 0% → 63% | -193.02d → -191d |
| RHD4CZ4L09ST1203 | Bedding works for GRP Pipe Line 700 mm - (RD-L-9)-Z4-L09-ST | 2027-04-18 → 2027-04-15 (-3d) | 2027-04-20 → 2027-04-17 (-3d) |  | -197.02d → -195d |
| RHD4CZ4L09ST1303 | Installing for GRP Pipe Line 700 mm - (RD-L-9)-Z4-L09-ST | 2027-04-20 → 2027-04-18 (-2d) | 2027-04-22 → 2027-04-19 (-3d) |  | -197.02d → -195d |
| RHD4CZ4L09ST1403 | Primary Test for GRP Pipe Line 700 mm - (RD-L-9)-Z4-L09-ST | 2027-04-22 → 2027-04-20 (-2d) | 2027-04-25 → 2027-04-21 (-4d) |  | -197.02d → -195d |
| RHD4CZ4L09ST1503 | Backfilling and warning tape works for GRP Pipe Line 700 mm - (RD-L-9)-Z4-L09-ST | 2027-04-25 → 2027-04-22 (-3d) | 2027-04-27 → 2027-04-24 (-3d) |  | -197.02d → -195d |
| 2603 | **RHD4-02-002-L09-(ST)-GRP Pipes - 600 mm diameter** | 2027-04-08 → 2026-11-12 (-147d) | 2027-04-29 → 2027-04-26 (-3d) |  |  |
| RHD4CZ4L09ST1102 | Excavation works for GRP Pipe Line 600 mm - (RD-L-9)-Z4-L09-ST | 2027-04-08 → 2026-11-12 A (-147d) | 2027-04-11 → 2027-04-07 (-4d) | 0% → 81% | -189.02d → -187d |
| RHD4CZ4L09ST1202 | Bedding works for GRP Pipe Line 600 mm - (RD-L-9)-Z4-L09-ST | 2027-04-11 → 2027-04-08 (-3d) | 2027-04-13 → 2027-04-10 (-3d) |  | -189.02d → -187d |
| RHD4CZ4L09ST1302 | Installing for GRP Pipe Line 600 mm - (RD-L-9)-Z4-L09-ST | 2027-04-13 → 2027-04-11 (-2d) | 2027-04-15 → 2027-04-12 (-3d) |  | -189.02d → -187d |
| RHD4CZ4L09ST1402 | Primary Test for GRP Pipe Line 600 mm - (RD-L-9)-Z4-L09-ST | 2027-04-25 → 2027-04-22 (-3d) | 2027-04-27 → 2027-04-24 (-3d) |  | -197.02d → -195d |
| RHD4CZ4L09ST1502 | Backfilling and warning tape works for GRP Pipe Line 600 mm - (RD-L-9)-Z4-L09-ST | 2027-04-27 → 2027-04-25 (-2d) | 2027-04-29 → 2027-04-26 (-3d) |  | -197.02d → -195d |
| 2615 | **RHD4-02-002-L09-(ST)-UPVC Pipes - 300 mm diameter** |  | 2027-05-20 → 2027-05-12 (-8d) |  |  |
| RHD4CZ4L09ST2100 | Excavation works for UPVC Pipe Line 300 mm - (RD-L-9)-Z4-L09-ST |  | 2027-04-13 → 2027-04-10 (-3d) |  | -183.02d → -181d |
| RHD4CZ4L09ST2200 | Bedding works for UPVC Pipe Line 300 mm - (RD-L-9)-Z4-L09-ST |  | 2027-04-17 → 2027-04-13 (-4d) |  | -137.02d → -135d |
| RHD4CZ4L09ST2300 | Installing for UPVC Pipe Line 300 mm - (RD-L-9)-Z4-L09-ST |  | 2027-04-21 → 2027-04-18 (-3d) |  | -137.02d → -135d |
| RHD4CZ4L09ST2400 | Primary Test for UPVC Pipe Line 300 mm - (RD-L-9)-Z4-L09-ST | 2027-04-21 → 2027-04-19 (-2d) | 2027-04-25 → 2027-04-21 (-4d) |  | -137.02d → -135d |
| RHD4CZ4L09ST2500 | Backfilling and warning tape works for UPVC Pipe Line 300 mm - (RD-L-9)-Z4-L09-ST | 2027-05-11 → 2027-05-09 (-2d) | 2027-05-20 → 2027-05-12 (-8d) |  | -151.02d → -149d |
| 2623 | **RHD4-02-002-L09-(ST)-Concrete Encasement** | 2027-04-19 → 2027-04-17 (-2d) | 2027-04-21 → 2027-04-18 (-3d) |  |  |
| RHD4CZ4L09ST6100 | Pipe Encasement for Storm Pipelines - (RD-L-9)-Z4-L09-ST | 2027-04-19 → 2027-04-17 (-2d) | 2027-04-21 → 2027-04-18 (-3d) |  | -134.02d → -132d |
| 2624 | **RHD4-02-002-Z4-L09-Catch Basin - ST** |  | 2027-05-23 → 2027-05-19 (-4d) |  |  |
| 2625 | **RHD4-02-002-L09-(ST)-Single Catch Basin Works** |  | 2027-05-23 → 2027-05-19 (-4d) |  |  |
| RHD4CZ4L09ST7100 | Excavation works for Single Catch Basin - (RD-L-9)-Z4-L09-ST |  | 2027-04-19 → 2027-04-15 (-4d) |  | -162.02d → -158d |
| RHD4CZ4L09ST7200 | PC Blinding, Installation and Pipe connection for Single Catch Basin - (RD-L-9)-Z4-L09-ST |  | 2027-04-25 → 2027-04-21 (-4d) |  | -162.02d → -158d |
| RHD4CZ4L09ST7300 | Rings & C.Slab & Final Backfill for Single Catch Basin - (RD-L-9)-Z4-L09-ST | 2027-04-25 → 2027-04-22 (-3d) | 2027-05-02 → 2027-04-28 (-4d) |  | -162.02d → -158d |
| RHD4CZ4L09ST7400 | Steel Cover for Single Catch Basin - (RD-L-9)-Z4-L09-ST | 2027-05-02 → 2027-04-29 (-3d) | 2027-05-08 → 2027-05-04 (-4d) |  | -162.02d → -158d |
| RHD4CZ4L09ST7500 | Finishing and Insulation works for Single Catch Basin - (RD-L-9)-Z4-L09-ST | 2027-05-08 → 2027-05-05 (-3d) | 2027-05-23 → 2027-05-19 (-4d) |  | -162.02d → -158d |
| 2649 | **RHD4-02-002-Z4-L09-Sewage Network - SW** |  | 2027-07-13 → 2027-07-10 (-3d) |  |  |
| 957 | **RHD4-02-002-L09-(SW)-MH Works - 1200 mm diameter with Back drop** | 2027-04-29 → 2027-04-27 (-2d) | 2027-05-11 → 2027-05-08 (-3d) |  |  |
| RHD4CZ4L09SW3101 | Excavation and PC Blinding works for MH 1200 mm - (RD-L-9)-Z4-L09-SW | 2027-04-29 → 2027-04-27 (-2d) | 2027-05-02 → 2027-04-28 (-4d) |  | -151.02d → -149d |
| RHD4CZ4L09SW3201 | Installation of Base for MH 1200 mm - (RD-L-9)-Z4-L09-SW | 2027-05-02 → 2027-04-29 (-3d) | 2027-05-04 → 2027-05-01 (-3d) |  | -151.02d → -149d |
| RHD4CZ4L09SW3301 | MH Ring and C.Slab works and Backfilling works for MH 1200 mm - (RD-L-9)-Z4-L09-SW | 2027-05-04 → 2027-05-02 (-2d) | 2027-05-06 → 2027-05-03 (-3d) |  | -151.02d → -149d |
| RHD4CZ4L09SW3401 | Steel Cover for MH 1200 mm - (RD-L-9)-Z4-L09-SW | 2027-05-06 → 2027-05-04 (-2d) | 2027-05-09 → 2027-05-05 (-4d) |  | -151.02d → -149d |
| RHD4CZ4L09SW3501 | Finishing, Benching, Testing works for MH 1200 mm - (RD-L-9)-Z4-L09-SW | 2027-05-09 → 2027-05-06 (-3d) | 2027-05-11 → 2027-05-08 (-3d) |  | -151.02d → -149d |
| 2659 | **RHD4-02-002-L09-(SW)-MH Works - 1200 mm diameter** |  | 2027-07-13 → 2027-07-10 (-3d) |  |  |
| RHD4CZ4L09SW3100 | Excavation and PC Blinding works for MH 1200 mm - (RD-L-9)-Z4-L09-SW |  | 2027-05-08 → 2027-05-04 (-4d) |  | -197.02d → -195d |
| RHD4CZ4L09SW3200 | Installation of Base for MH 1200 mm - (RD-L-9)-Z4-L09-SW |  | 2027-05-24 → 2027-05-20 (-4d) |  | -197.02d → -195d |
| RHD4CZ4L09SW3300 | MH Ring and C.Slab works and Backfilling works for MH 1200 mm - (RD-L-9)-Z4-L09-SW | 2027-05-24 → 2027-05-22 (-2d) | 2027-06-13 → 2027-06-09 (-4d) |  | -197.02d → -195d |
| RHD4CZ4L09SW3400 | Steel Cover for MH 1200 mm - (RD-L-9)-Z4-L09-SW | 2027-06-13 → 2027-06-10 (-3d) | 2027-06-23 → 2027-06-20 (-3d) |  | -197.02d → -195d |
| RHD4CZ4L09SW3500 | Finishing, Benching, Testing works for MH 1200 mm - (RD-L-9)-Z4-L09-SW | 2027-06-23 → 2027-06-21 (-2d) | 2027-07-13 → 2027-07-10 (-3d) |  | -197.02d → -195d |
| 2655 | **RHD4-02-002-L09-(SW)-UPVC Pipes - 200 mm diameter** |  | 2027-06-13 → 2027-06-09 (-4d) |  |  |
| RHD4CZ4L09SW2100 | Excavation works for UPVC Pipe Line 200 mm - (RD-L-9)-Z4-L09-SW |  | 2027-05-08 → 2027-05-04 (-4d) |  | -172.02d → -170d |
| RHD4CZ4L09SW2200 | Bedding works for UPVC Pipe Line 200 mm - (RD-L-9)-Z4-L09-SW |  | 2027-05-19 → 2027-05-11 (-8d) |  | -172.02d → -170d |
| RHD4CZ4L09SW2300 | Installing for UPVC Pipe Line 200 mm - (RD-L-9)-Z4-L09-SW |  | 2027-05-30 → 2027-05-26 (-4d) |  | -172.02d → -170d |
| RHD4CZ4L09SW2400 | Primary Test for UPVC Pipe Line 200 mm - (RD-L-9)-Z4-L09-SW | 2027-05-30 → 2027-05-27 (-3d) | 2027-06-03 → 2027-05-31 (-3d) |  | -172.02d → -170d |
| RHD4CZ4L09SW2500 | Backfilling and warning tape works for UPVC Pipe Line 200 mm - (RD-L-9)-Z4-L09-SW | 2027-06-03 → 2027-06-01 (-2d) | 2027-06-13 → 2027-06-09 (-4d) |  | -172.02d → -170d |
| 2686 | **RHD4-02-002-Z4-L09-Potable Network - PT** | 2027-06-03 → 2027-06-01 (-2d) | 2027-09-08 → 2027-09-05 (-3d) |  |  |
| 2687 | **RHD4-02-002-L09-(PT)-HDPE Pipes - 110 mm diameter** | 2027-07-13 → 2027-07-11 (-2d) | 2027-07-31 → 2027-07-27 (-4d) |  |  |
| RHD4CZ4L09PT1100 | Excavation works for HDPE Pipline 110 mm - (RD-L-9)-Z4-L09-PT | 2027-07-13 → 2027-07-11 (-2d) | 2027-07-15 → 2027-07-12 (-3d) |  | -197.02d → -195d |
| RHD4CZ4L09PT1200 | Bedding works for HDPE Pipline 110 mm - (RD-L-9)-Z4-L09-PT | 2027-07-15 → 2027-07-13 (-2d) | 2027-07-18 → 2027-07-14 (-4d) |  | -125.02d → -123d |
| RHD4CZ4L09PT1300 | Installing for HDPE Pipline 110 mm - (RD-L-9)-Z4-L09-PT | 2027-07-18 → 2027-07-15 (-3d) | 2027-07-20 → 2027-07-17 (-3d) |  | -125.02d → -123d |
| RHD4CZ4L09PT1400 | Primary Test for HDPE Pipline 110 mm - (RD-L-9)-Z4-L09-PT | 2027-07-26 → 2027-07-24 (-2d) | 2027-07-28 → 2027-07-25 (-3d) |  | -125.02d → -123d |
| RHD4CZ4L09PT1500 | Backfilling and warning tape works for HDPE Pipline 110 mm - (RD-L-9)-Z4-L09-PT | 2027-07-28 → 2027-07-26 (-2d) | 2027-07-31 → 2027-07-27 (-4d) |  | -125.02d → -123d |

| ID | Task | Start | Finish | Total float |
| --- | --- | --- | --- | --- |
| 1939 | **RHD4-02-002-L09-(PT)-Wash out Valves** | 2027-06-19 → 2027-06-16 (-3d) | 2027-06-23 → 2027-06-20 (-3d) |  |
| RHD4CZ4L09PT3102 | Installation for Wash out Valves for Potable Water Network - (RD-L-9)-Z4-L09-PT | 2027-06-19 → 2027-06-16 (-3d) | 2027-06-21 → 2027-06-17 (-4d) | -172.02d → -170d |
| RHD4CZ4L09PT3202 | Stem and Service box for Wash out Valves for Potable Water Network - (RD-L-9)-Z4-L09-PT | 2027-06-21 → 2027-06-19 (-2d) | 2027-06-23 → 2027-06-20 (-3d) | -172.02d → -170d |
| 2688 | **RHD4-02-002-L09-(PT)-HDPE Pipes - 160 mm diameter** | 2027-07-13 → 2027-07-11 (-2d) | 2027-08-02 → 2027-07-29 (-4d) |  |
| RHD4CZ4L09PT1101 | Excavation works for HDPE Pipline 160 mm - (RD-L-9)-Z4-L09-PT | 2027-07-13 → 2027-07-11 (-2d) | 2027-07-17 → 2027-07-13 (-4d) | -197.02d → -195d |
| RHD4CZ4L09PT1201 | Bedding works for HDPE Pipline 160 mm - (RD-L-9)-Z4-L09-PT | 2027-07-17 → 2027-07-14 (-3d) | 2027-07-20 → 2027-07-17 (-3d) | -128.02d → -126d |
| RHD4CZ4L09PT1301 | Installing for HDPE Pipline 160 mm - (RD-L-9)-Z4-L09-PT | 2027-07-20 → 2027-07-18 (-2d) | 2027-07-26 → 2027-07-22 (-4d) | -128.02d → -126d |
| RHD4CZ4L09PT1401 | Primary Test for HDPE Pipline 160 mm - (RD-L-9)-Z4-L09-PT | 2027-07-26 → 2027-07-24 (-2d) | 2027-07-28 → 2027-07-25 (-3d) | -127.02d → -125d |
| RHD4CZ4L09PT1501 | Backfilling and warning tape works for HDPE Pipline 160 mm - (RD-L-9)-Z4-L09-PT | 2027-07-28 → 2027-07-26 (-2d) | 2027-08-02 → 2027-07-29 (-4d) | -127.02d → -125d |
| 2690 | **RHD4-02-002-L09-(PT)-HDPE Pipes - 400 mm diameter** | 2027-06-03 → 2027-06-01 (-2d) | 2027-08-03 → 2027-07-31 (-3d) |  |
| RHD4CZ4L09PT1103 | Excavation works for HDPE Pipline 400 mm - (RD-L-9)-Z4-L09-PT | 2027-06-03 → 2027-06-01 (-2d) | 2027-06-08 → 2027-06-05 (-3d) | -172.02d → -170d |
| RHD4CZ4L09PT1203 | Bedding works for HDPE Pipline 400 mm - (RD-L-9)-Z4-L09-PT | 2027-06-08 → 2027-06-06 (-2d) | 2027-06-13 → 2027-06-09 (-4d) | -172.02d → -170d |
| RHD4CZ4L09PT1303 | Installing for HDPE Pipline 400 mm - (RD-L-9)-Z4-L09-PT | 2027-06-13 → 2027-06-10 (-3d) | 2027-06-19 → 2027-06-15 (-4d) | -172.02d → -170d |
| RHD4CZ4L09PT1403 | Primary Test for HDPE Pipline 400 mm - (RD-L-9)-Z4-L09-PT | 2027-07-26 → 2027-07-24 (-2d) | 2027-07-29 → 2027-07-26 (-3d) | -128.02d → -126d |
| RHD4CZ4L09PT1503 | Backfilling and warning tape works for HDPE Pipline 400 mm - (RD-L-9)-Z4-L09-PT | 2027-07-29 → 2027-07-27 (-2d) | 2027-08-03 → 2027-07-31 (-3d) | -128.02d → -126d |
| 2692 | **RHD4-02-002-L09-(PT)-Gate Valves (Direct Buried)** | 2027-07-22 → 2027-07-20 (-2d) | 2027-08-07 → 2027-08-03 (-4d) |  |
| RHD4CZ4L09PT3100 | Installation for Direct Buried Gate Valves - (RD-L-9)-Z4-L09-PT | 2027-07-22 → 2027-07-20 (-2d) | 2027-07-26 → 2027-07-22 (-4d) | -128.02d → -126d |
| RHD4CZ4L09PT3200 | Stem and Service box for Direct Buried Gate Valves - (RD-L-9)-Z4-L09-PT | 2027-08-03 → 2027-08-01 (-2d) | 2027-08-07 → 2027-08-03 (-4d) | -124.02d → -122d |
| 2697 | **RHD4-02-002-L09-(PT)-Air Valve Chambers** | 2027-06-08 → 2027-06-06 (-2d) | 2027-06-17 → 2027-06-14 (-3d) |  |
| RHD4CZ4L09PT2102 | Excavation and Bedding for Air Valve Chambers for Potable Water Network - (RD-L-9)-Z4-L09-PT | 2027-06-08 → 2027-06-06 (-2d) | 2027-06-10 → 2027-06-07 (-3d) | -169.02d → -167d |
| RHD4CZ4L09PT2202 | PC works for Air Valve Chambers for Potable Water Network - (RD-L-9)-Z4-L09-PT | 2027-06-10 → 2027-06-08 (-2d) | 2027-06-13 → 2027-06-09 (-4d) | -169.02d → -167d |
| RHD4CZ4L09PT2302 | Installation for Air Valve Chambers for Potable Water Network - (RD-L-9)-Z4-L09-PT | 2027-06-13 → 2027-06-10 (-3d) | 2027-06-15 → 2027-06-12 (-3d) | -169.02d → -167d |
| RHD4CZ4L09PT2402 | Backfilling works for Air Valve Chambers for Potable Water Network - (RD-L-9)-Z4-L09-PT | 2027-06-15 → 2027-06-13 (-2d) | 2027-06-17 → 2027-06-14 (-3d) | -169.02d → -167d |
| 2698 | **RHD4-02-002-L09-(PT)-Air Valves** | 2027-06-19 → 2027-06-16 (-3d) | 2027-06-23 → 2027-06-20 (-3d) |  |
| RHD4CZ4L09PT3103 | Installation for Air Valves for Potable Water Network - (RD-L-9)-Z4-L09-PT | 2027-06-19 → 2027-06-16 (-3d) | 2027-06-21 → 2027-06-17 (-4d) | -172.02d → -170d |
| RHD4CZ4L09PT3203 | Stem and Service box for Air Valves for Potable Water Network - (RD-L-9)-Z4-L09-PT | 2027-06-21 → 2027-06-19 (-2d) | 2027-06-23 → 2027-06-20 (-3d) | -172.02d → -170d |
| 2699 | **RHD4-02-002-L09-(PT)-Fire Hydrant** | 2027-08-03 → 2027-08-01 (-2d) | 2027-09-08 → 2027-09-05 (-3d) |  |
| RHD4CZ4L09PT4100 | Excavation and Bedding and Pipe Installation for Fire Hydrant - (RD-L-9)-Z4-L09-PT | 2027-08-03 → 2027-08-01 (-2d) | 2027-08-14 → 2027-08-10 (-4d) | -128.02d → -126d |
| RHD4CZ4L09PT4200 | Valve Installation for Fire Hydrant - (RD-L-9)-Z4-L09-PT | 2027-08-14 → 2027-08-11 (-3d) | 2027-08-21 → 2027-08-17 (-4d) | -128.02d → -126d |
| RHD4CZ4L09PT4300 | Stem for Fire Hydrant - (RD-L-9)-Z4-L09-PT | 2027-08-21 → 2027-08-18 (-3d) | 2027-08-28 → 2027-08-24 (-4d) | -128.02d → -126d |
| RHD4CZ4L09PT4400 | Fire Installation for Fire Hydrant - (RD-L-9)-Z4-L09-PT | 2027-08-28 → 2027-08-25 (-3d) | 2027-09-04 → 2027-08-31 (-4d) | -128.02d → -126d |
| RHD4CZ4L09PT4500 | Protection Barriers for Fire Hydrant - (RD-L-9)-Z4-L09-PT | 2027-09-04 → 2027-09-01 (-3d) | 2027-09-08 → 2027-09-05 (-3d) | -128.02d → -126d |
| 2700 | **RHD4-02-002-L09-(PT)-Concrete Encasement** | 2027-07-21 → 2027-07-19 (-2d) | 2027-07-26 → 2027-07-22 (-4d) |  |
| RHD4CZ4L09PT5100 | Pipe Encasement for Potable Pipelines - (RD-L-9)-Z4-L09-PT | 2027-07-21 → 2027-07-19 (-2d) | 2027-07-26 → 2027-07-22 (-4d) | -128.02d → -126d |
| 1747 | **RHD4-02-002-L09-(PT)-Butterfly Valve Chamber** | 2027-07-15 → 2027-07-13 (-2d) | 2027-07-25 → 2027-07-21 (-4d) |  |
| RHD4CZ4L09PT2100 | Excavation and Bedding for Butterfly Valve Chamber for Potable Water Network - (RD-L-9)-Z4-L09-PT | 2027-07-15 → 2027-07-13 (-2d) | 2027-07-18 → 2027-07-14 (-4d) | -155.02d → -153d |
| RHD4CZ4L09PT2200 | PC works for Butterfly Valve Chamber for Potable Water Network - (RD-L-9)-Z4-L09-PT | 2027-07-18 → 2027-07-15 (-3d) | 2027-07-20 → 2027-07-17 (-3d) | -155.02d → -153d |
| RHD4CZ4L09PT2300 | Installation for Butterfly Valve Chamber for Potable Water Network - (RD-L-9)-Z4-L09-PT | 2027-07-20 → 2027-07-18 (-2d) | 2027-07-22 → 2027-07-19 (-3d) | -155.02d → -153d |
| RHD4CZ4L09PT2400 | Backfilling works for Butterfly Valve Chamber for Potable Water Network - (RD-L-9)-Z4-L09-PT | 2027-07-22 → 2027-07-20 (-2d) | 2027-07-25 → 2027-07-21 (-4d) | -155.02d → -153d |
| 1748 | **RHD4-02-002-L09-(PT)-Butterfly Valves** | 2027-07-22 → 2027-07-20 (-2d) | 2027-07-27 → 2027-07-24 (-3d) |  |
| RHD4CZ4L09PT3101 | Installation for Butterfly Valves for Potable Water Network - (RD-L-9)-Z4-L09-PT | 2027-07-22 → 2027-07-20 (-2d) | 2027-07-25 → 2027-07-21 (-4d) | -155.02d → -153d |
| RHD4CZ4L09PT3201 | Stem and Service box for Butterfly Valves for Potable Water Network - (RD-L-9)-Z4-L09-PT | 2027-07-25 → 2027-07-22 (-3d) | 2027-07-27 → 2027-07-24 (-3d) | -155.02d → -153d |
| 1938 | **RHD4-02-002-L09-(PT)-Wash out Valve Chambers** | 2027-07-15 → 2027-07-13 (-2d) | 2027-07-25 → 2027-07-21 (-4d) |  |
| RHD4CZ4L09PT2101 | Excavation and Bedding for Wash out Valve Chambers for Potable Water Network - (RD-L-9)-Z4-L09-PT | 2027-07-15 → 2027-07-13 (-2d) | 2027-07-18 → 2027-07-14 (-4d) | -192.02d → -190d |
| RHD4CZ4L09PT2201 | PC works for Wash out Valve Chambers for Potable Water Network - (RD-L-9)-Z4-L09-PT | 2027-07-18 → 2027-07-15 (-3d) | 2027-07-20 → 2027-07-17 (-3d) | -192.02d → -190d |
| RHD4CZ4L09PT2301 | Installation for Wash out Valve Chambers for Potable Water Network - (RD-L-9)-Z4-L09-PT | 2027-07-20 → 2027-07-18 (-2d) | 2027-07-22 → 2027-07-19 (-3d) | -192.02d → -190d |
| RHD4CZ4L09PT2401 | Backfilling works for Wash out Valve Chambers for Potable Water Network - (RD-L-9)-Z4-L09-PT | 2027-07-22 → 2027-07-20 (-2d) | 2027-07-25 → 2027-07-21 (-4d) | -192.02d → -190d |
| 2701 | **RHD4-02-002-Z4-L09-Irrigation Network - IRR** | 2027-07-13 → 2027-07-11 (-2d) | 2027-08-19 → 2027-08-16 (-3d) |  |
| 2702 | **RHD4-02-002-L09-(IRR)-HDPE Pipes - 160 mm diameter** | 2027-07-13 → 2027-07-11 (-2d) | 2027-08-19 → 2027-08-16 (-3d) |  |
| RHD4CZ4L09IRR1100 | Excavation works for HDPE Pipline 160 mm - (RD-L-9)-Z4-L09-IRR | 2027-07-13 → 2027-07-11 (-2d) | 2027-07-21 → 2027-07-18 (-3d) | -197.02d → -195d |
| RHD4CZ4L09IRR1200 | Bedding works for HDPE Pipline 160 mm - (RD-L-9)-Z4-L09-IRR | 2027-07-21 → 2027-07-19 (-2d) | 2027-07-29 → 2027-07-26 (-3d) | -195.02d → -193d |
| RHD4CZ4L09IRR1300 | Installing for HDPE Pipline 160 mm - (RD-L-9)-Z4-L09-IRR | 2027-07-29 → 2027-07-27 (-2d) | 2027-08-07 → 2027-08-03 (-4d) | -195.02d → -193d |
| RHD4CZ4L09IRR1400 | Primary Test for HDPE Pipline 160 mm - (RD-L-9)-Z4-L09-IRR | 2027-08-07 → 2027-08-04 (-3d) | 2027-08-11 → 2027-08-08 (-3d) | -192.02d → -190d |
| RHD4CZ4L09IRR1500 | Backfilling and warning tape works for HDPE Pipline 160 mm - (RD-L-9)-Z4-L09-IRR | 2027-08-11 → 2027-08-09 (-2d) | 2027-08-19 → 2027-08-16 (-3d) | -192.02d → -190d |
| 2710 | **RHD4-02-002-L09-(IRR)-Gate Valves (Direct Buried)** | 2027-08-02 → 2027-07-31 (-2d) | 2027-08-11 → 2027-08-08 (-3d) |  |
| RHD4CZ4L09IRR3100 | Installation for Direct Buried Gate Valves - (RD-L-9)-Z4-L09-IRR | 2027-08-02 → 2027-07-31 (-2d) | 2027-08-07 → 2027-08-03 (-4d) | -194.02d → -192d |
| RHD4CZ4L09IRR3200 | Stem and Service box for Direct Buried Gate Valves - (RD-L-9)-Z4-L09-IRR | 2027-08-07 → 2027-08-04 (-3d) | 2027-08-11 → 2027-08-08 (-3d) | -194.02d → -192d |
| 2713 | **RHD4-02-002-L09-(IRR)-Wash out Chamber** | 2027-08-07 → 2027-08-04 (-3d) | 2027-08-16 → 2027-08-12 (-4d) |  |
| RHD4CZ4L09IRR2101 | Excavation and Bedding for Wash out Chamber for Irrigation Network - (RD-L-9)-Z4-L09-IRR | 2027-08-07 → 2027-08-04 (-3d) | 2027-08-09 → 2027-08-05 (-4d) | -195.02d → -193d |
| RHD4CZ4L09IRR2201 | PC works for Wash out Chamber for Irrigation Network - (RD-L-9)-Z4-L09-IRR | 2027-08-09 → 2027-08-07 (-2d) | 2027-08-11 → 2027-08-08 (-3d) | -195.02d → -193d |
| RHD4CZ4L09IRR2301 | Installation for Wash out Chamber for Irrigation Network - (RD-L-9)-Z4-L09-IRR | 2027-08-11 → 2027-08-09 (-2d) | 2027-08-14 → 2027-08-10 (-4d) | -195.02d → -193d |
| RHD4CZ4L09IRR2401 | Backfilling works for Wash out Chamber for Irrigation Network - (RD-L-9)-Z4-L09-IRR | 2027-08-14 → 2027-08-11 (-3d) | 2027-08-16 → 2027-08-12 (-4d) | -195.02d → -193d |
| 2714 | **RHD4-02-002-L09-(IRR)-Wash out Valves** | 2027-08-14 → 2027-08-11 (-3d) | 2027-08-18 → 2027-08-15 (-3d) |  |
| RHD4CZ4L09IRR3102 | Installation for Wash out Valve for Irrigation Network - (RD-L-9)-Z4-L09-IRR | 2027-08-14 → 2027-08-11 (-3d) | 2027-08-16 → 2027-08-12 (-4d) | -195.02d → -193d |
| RHD4CZ4L09IRR3202 | Stem and Service box for Wash out Valve for Irrigation Network - (RD-L-9)-Z4-L09-IRR | 2027-08-16 → 2027-08-14 (-2d) | 2027-08-18 → 2027-08-15 (-3d) | -195.02d → -193d |
| 2735 | **RHD4-02-002-Z4-L09-Medium Voltage Network - MV** | 2027-06-09 → 2027-06-07 (-2d) | 2027-08-14 → 2027-08-10 (-4d) |  |
| 2736 | **RHD4-02-002-L09-(MV)-Medium Voltage cable trench** | 2027-06-09 → 2027-06-07 (-2d) | 2027-07-14 → 2027-07-11 (-3d) |  |
| RHD4CZ4L09MV1100 | Excavation for Medium Voltage Trench - (RD-L-9)-Z4-L09-MV | 2027-06-09 → 2027-06-07 (-2d) | 2027-06-16 → 2027-06-13 (-3d) | -157.02d → -155d |
| RHD4CZ4L09MV1200 | Trench Backfilling for Medium Voltage Network - (RD-L-9)-Z4-L09-MV | 2027-07-07 → 2027-07-05 (-2d) | 2027-07-14 → 2027-07-11 (-3d) | -157.02d → -155d |
| 2738 | **RHD4-02-002-L09-(MV)-Medium Voltage cables 3Cx 500 mm²** | 2027-06-16 → 2027-06-14 (-2d) | 2027-08-01 → 2027-07-28 (-4d) |  |

| ID | Task | Start | Finish | Total float |
| --- | --- | --- | --- | --- |
| RHD4CZ4L09MV3100 | Installation of Medium Voltage Cables 3Cx 500 mm² - (RD-L-9)-Z4-L09-MV | 2027-06-16 → 2027-06-14 (-2d) | 2027-07-01 → 2027-06-28 (-3d) | -157.02d → -155d |
| RHD4CZ4L09MV3200 | Joints Installation of Medium Voltage Cables 3Cx 500 mm² - (RD-L-9)-Z4-L09-MV | 2027-07-01 → 2027-06-29 (-2d) | 2027-07-07 → 2027-07-04 (-3d) | -157.02d → -155d |
| RHD4CZ4L09MV3300 | Testing of Medium Voltage Cables 3Cx 500 mm² - (RD-L-9)-Z4-L09-MV | 2027-07-14 → 2027-07-12 (-2d) | 2027-07-29 → 2027-07-26 (-3d) | -129.02d → -127d |
| RHD4CZ4L09MV3400 | Termination of Medium Voltage Cables 3Cx 500 mm² - (RD-L-9)-Z4-L09-MV | 2027-07-29 → 2027-07-27 (-2d) | 2027-08-01 → 2027-07-28 (-4d) | -129.02d → -127d |
| 2739 | **RHD4-02-002-L09-(MV)-Medium Voltage cables 3Cx 50 mm²** | 2027-06-16 → 2027-06-14 (-2d) | 2027-07-19 → 2027-07-15 (-4d) |  |
| RHD4CZ4L09MV3101 | Installation of Medium Voltage Cables 3Cx 50 mm² - (RD-L-9)-Z4-L09-MV | 2027-06-16 → 2027-06-14 (-2d) | 2027-06-19 → 2027-06-15 (-4d) | -141.02d → -139d |
| RHD4CZ4L09MV3301 | Testing of Medium Voltage Cables 3Cx 50 mm² - (RD-L-9)-Z4-L09-MV | 2027-07-14 → 2027-07-12 (-2d) | 2027-07-17 → 2027-07-13 (-4d) | -141.02d → -139d |
| RHD4CZ4L09MV3401 | Termination of Medium Voltage Cables 3Cx 50 mm² - (RD-L-9)-Z4-L09-MV | 2027-07-17 → 2027-07-14 (-3d) | 2027-07-19 → 2027-07-15 (-4d) | -118.02d → -116d |
| 2740 | **RHD4-02-002-L09-(MV)-Normally open Point (Outdoor Type)** | 2027-06-29 → 2027-06-27 (-2d) | 2027-07-04 → 2027-06-30 (-4d) |  |
| RHD4CZ4L09MV4100 | Installation for Normally open Point - (RD-L-9)-Z4-L09-MV | 2027-06-29 → 2027-06-27 (-2d) | 2027-07-01 → 2027-06-28 (-3d) | -145.02d → -143d |
| RHD4CZ4L09MV4200 | Termination for Normally open Point - (RD-L-9)-Z4-L09-MV | 2027-07-01 → 2027-06-29 (-2d) | 2027-07-04 → 2027-06-30 (-4d) | -145.02d → -143d |
| 2741 | **RHD4-02-002-L09-(MV)-Unit Substations** | 2027-07-14 → 2027-07-12 (-2d) | 2027-08-14 → 2027-08-10 (-4d) |  |
| RHD4CZ4L09MV5100 | Excavation for Unit Substations for Medium Voltage Network - (RD-L-9)-Z4-L09-MV | 2027-07-14 → 2027-07-12 (-2d) | 2027-07-19 → 2027-07-15 (-4d) | -157.02d → -155d |
| RHD4CZ4L09MV5200 | Concrete Base Placement for Unit Substations for Medium Voltage Network - (RD-L-9)-Z4-L09-MV | 2027-07-19 → 2027-07-17 (-2d) | 2027-07-24 → 2027-07-20 (-4d) | -157.02d → -155d |
| RHD4CZ4L09MV5300 | Installation for Fences and doors for Medium Voltage Network - (RD-L-9)-Z4-L09-MV | 2027-07-24 → 2027-07-21 (-3d) | 2027-08-04 → 2027-08-01 (-3d) | -157.02d → -155d |
| RHD4CZ4L09MV5400 | Installation for Unit Substations for Medium Voltage Network - (RD-L-9)-Z4-L09-MV | 2027-08-04 → 2027-08-02 (-2d) | 2027-08-14 → 2027-08-10 (-4d) | -157.02d → -155d |
| 2742 | **RHD4-02-002-Z4-L09-Low Voltage Network - LV** | 2027-07-21 → 2027-07-19 (-2d) | 2027-10-16 → 2027-10-12 (-4d) |  |
| 2743 | **RHD4-02-002-L09-(LV)-Low Voltage duct banks** | 2027-07-21 → 2027-07-19 (-2d) | 2027-07-31 → 2027-07-27 (-4d) |  |
| RHD4CZ4L09LV2100 | Excavation of Duct Banks for Low Voltage Network - (RD-L-9)-Z4-L09-LV | 2027-07-21 → 2027-07-19 (-2d) | 2027-07-24 → 2027-07-20 (-4d) | -197.02d → -195d |
| RHD4CZ4L09LV2200 | Installation of Duct Banks for Low Voltage Network - (RD-L-9)-Z4-L09-LV | 2027-07-24 → 2027-07-21 (-3d) | 2027-07-26 → 2027-07-22 (-4d) | -196.02d → -194d |
| RHD4CZ4L09LV2300 | Pouring of Duct Banks for Low Voltage Network - (RD-L-9)-Z4-L09-LV | 2027-07-26 → 2027-07-24 (-2d) | 2027-07-28 → 2027-07-25 (-3d) | -196.02d → -194d |
| RHD4CZ4L09LV2400 | Backfilling of Duct Banks for Low Voltage Network - (RD-L-9)-Z4-L09-LV | 2027-07-28 → 2027-07-26 (-2d) | 2027-07-31 → 2027-07-27 (-4d) | -195.02d → -193d |
| 2745 | **RHD4-02-002-L09-(LV)-Low Voltage cables** | 2027-09-29 → 2027-09-27 (-2d) | 2027-10-09 → 2027-10-05 (-4d) |  |
| RHD4CZ4L09LV3100 | Excavation for Low Voltage Cables for Low Voltage Network - (RD-L-9)-Z4-L09-LV | 2027-09-29 → 2027-09-27 (-2d) | 2027-10-02 → 2027-09-28 (-4d) | -179.02d → -177d |
| RHD4CZ4L09LV3200 | Cable Laying of Low Voltage Cables for Low Voltage Network - (RD-L-9)-Z4-L09-LV | 2027-10-02 → 2027-09-29 (-3d) | 2027-10-04 → 2027-09-30 (-4d) | -179.02d → -177d |
| RHD4CZ4L09LV3300 | Warning tape and Backfill for Low Voltage Cables for Low Voltage Network - (RD-L-9)-Z4-L09-LV | 2027-10-04 → 2027-10-02 (-2d) | 2027-10-06 → 2027-10-03 (-3d) | -179.02d → -177d |
| RHD4CZ4L09LV3400 | Testing of Low Voltage Cables for Low Voltage Network - (RD-L-9)-Z4-L09-LV | 2027-10-06 → 2027-10-04 (-2d) | 2027-10-09 → 2027-10-05 (-4d) | -179.02d → -177d |
| 2746 | **RHD4-02-002-L09-(LV)-Low Voltage Distribution Pillars** | 2027-10-09 → 2027-10-06 (-3d) | 2027-10-16 → 2027-10-12 (-4d) |  |
| RHD4CZ4L09LV4100 | Leveling for Distribution Pillars for Low Voltage Network - (RD-L-9)-Z4-L09-LV | 2027-10-09 → 2027-10-06 (-3d) | 2027-10-11 → 2027-10-07 (-4d) | -179.02d → -177d |
| RHD4CZ4L09LV4200 | Lean Concrete for Distribution Pillars for Low Voltage Network - (RD-L-9)-Z4-L09-LV | 2027-10-11 → 2027-10-09 (-2d) | 2027-10-13 → 2027-10-10 (-3d) | -179.02d → -177d |
| RHD4CZ4L09LV4300 | Installation of Distribution Pillars for Low Voltage Network - (RD-L-9)-Z4-L09-LV | 2027-10-13 → 2027-10-11 (-2d) | 2027-10-16 → 2027-10-12 (-4d) | -179.02d → -177d |
| 2748 | **RHD4-02-002-Z4-L09-Street Lighting Network - SL** | 2027-07-14 → 2027-07-12 (-2d) | 2027-11-02 → 2027-10-30 (-3d) |  |
| 2749 | **RHD4-02-002-L09-(SL)-Street Lighting duct banks** | 2027-07-21 → 2027-07-19 (-2d) | 2027-08-04 → 2027-08-01 (-3d) |  |
| RHD4CZ4L09SL2100 | Excavation of Duct Banks for Street Lighting Network - (RD-L-9)-Z4-L09-SL | 2027-07-21 → 2027-07-19 (-2d) | 2027-07-25 → 2027-07-21 (-4d) | -197.02d → -195d |
| RHD4CZ4L09SL2200 | Installation of Duct Banks for Street Lighting Network - (RD-L-9)-Z4-L09-SL | 2027-07-25 → 2027-07-22 (-3d) | 2027-07-29 → 2027-07-26 (-3d) | -197.02d → -195d |
| RHD4CZ4L09SL2300 | Pouring of Duct Banks for Street Lighting Network - (RD-L-9)-Z4-L09-SL | 2027-07-29 → 2027-07-27 (-2d) | 2027-08-02 → 2027-07-29 (-4d) | -197.02d → -195d |
| RHD4CZ4L09SL2400 | Backfilling of Duct Banks for Street Lighting Network - (RD-L-9)-Z4-L09-SL | 2027-08-02 → 2027-07-31 (-2d) | 2027-08-04 → 2027-08-01 (-3d) | -197.02d → -195d |
| 2750 | **RHD4-02-002-L09-(SL)-Street Lighting Drawpit** | 2027-07-14 → 2027-07-12 (-2d) | 2027-07-29 → 2027-07-26 (-3d) |  |
| RHD4CZ4L09SL5100 | Excavation of Drawpit size 600x600x900mm for Street Lighting Network - (RD-L-9)-Z4-L09-SL | 2027-07-14 → 2027-07-12 (-2d) | 2027-07-17 → 2027-07-13 (-4d) | -146.02d → -144d |
| RHD4CZ4L09SL5200 | Installation of Drawpit size 600x600x900mm for Street Lighting Network - (RD-L-9)-Z4-L09-SL | 2027-07-27 → 2027-07-25 (-2d) | 2027-07-29 → 2027-07-26 (-3d) | -155.02d → -153d |
| 2751 | **RHD4-02-002-L09-(SL)-Street Lighting cables** | 2027-08-25 → 2027-08-23 (-2d) | 2027-10-16 → 2027-10-12 (-4d) |  |
| RHD4CZ4L09SL3100 | Excavation for Street Lighting Cables for Street Lighting Network - (RD-L-9)-Z4-L09-SL | 2027-08-25 → 2027-08-23 (-2d) | 2027-09-07 → 2027-09-04 (-3d) | -179.02d → -177d |
| RHD4CZ4L09SL3200 | Cable Laying of Street Lighting Cables for Street Lighting Network - (RD-L-9)-Z4-L09-SL | 2027-09-07 → 2027-09-05 (-2d) | 2027-09-18 → 2027-09-14 (-4d) | -179.02d → -177d |
| RHD4CZ4L09SL3300 | Warning tape and Backfill for Street Lighting Cables for Street Lighting Network - (RD-L-9)-Z4-L09-SL | 2027-09-18 → 2027-09-15 (-3d) | 2027-09-29 → 2027-09-26 (-3d) | -179.02d → -177d |
| RHD4CZ4L09SL3400 | Testing of Street Lighting Cables for Street Lighting Network - (RD-L-9)-Z4-L09-SL | 2027-10-09 → 2027-10-06 (-3d) | 2027-10-16 → 2027-10-12 (-4d) | -165.02d → -163d |
| 2752 | **RHD4-02-002-L09-(SL)-Street Lighting Poles** | 2027-08-04 → 2027-08-02 (-2d) | 2027-11-02 → 2027-10-30 (-3d) |  |
| RHD4CZ4L09SL1100 | Excavation for RC Base for Lighting Poles for Street Lighting Network - (RD-L-9)-Z4-L09-SL | 2027-08-04 → 2027-08-02 (-2d) | 2027-08-11 → 2027-08-08 (-3d) | -197.02d → -195d |
| RHD4CZ4L09SL1200 | Installation for RC Base for Lighting Poles for Street Lighting Network - (RD-L-9)-Z4-L09-SL | 2027-08-11 → 2027-08-09 (-2d) | 2027-08-18 → 2027-08-15 (-3d) | -179.02d → -177d |
| RHD4CZ4L09SL1300 | Backfill for RC Base for Lighting Poles for Street Lighting Network - (RD-L-9)-Z4-L09-SL | 2027-08-18 → 2027-08-16 (-2d) | 2027-08-25 → 2027-08-22 (-3d) | -179.02d → -177d |
| RHD4CZ4L09SL1400 | Installation for Lighting Poles for Street Lighting Network - (RD-L-9)-Z4-L09-SL | 2027-10-16 → 2027-10-13 (-3d) | 2027-10-26 → 2027-10-23 (-3d) | -165.02d → -163d |
| RHD4CZ4L09SL1500 | Luminaire Installation for Lighting Poles for Street Lighting Network - (RD-L-9)-Z4-L09-SL | 2027-10-26 → 2027-10-24 (-2d) | 2027-11-02 → 2027-10-30 (-3d) | -165.02d → -163d |
| 2753 | **RHD4-02-002-L09-(SL)-Street Lighting Feeder Pillars** | 2027-10-16 → 2027-10-13 (-3d) | 2027-10-28 → 2027-10-25 (-3d) |  |
| RHD4CZ4L09SL4100 | Leveling for Distribution Pillars for Street Lighting Network - (RD-L-9)-Z4-L09-SL | 2027-10-16 → 2027-10-13 (-3d) | 2027-10-18 → 2027-10-14 (-4d) | -158.02d → -156d |
| RHD4CZ4L09SL4200 | Lean Concrete for Distribution Pillars for Street Lighting Network - (RD-L-9)-Z4-L09-SL | 2027-10-18 → 2027-10-16 (-2d) | 2027-10-20 → 2027-10-17 (-3d) | -158.02d → -156d |
| RHD4CZ4L09SL4300 | Installation of Distribution Pillars for Street Lighting Network - (RD-L-9)-Z4-L09-SL | 2027-10-26 → 2027-10-24 (-2d) | 2027-10-28 → 2027-10-25 (-3d) | -163.02d → -161d |
| 2754 | **RHD4-02-002-L09-(SL)-Street Lighting Earthing System** | 2027-10-28 → 2027-10-26 (-2d) | 2027-10-31 → 2027-10-27 (-4d) |  |
| RHD4CZ4L09SL6100 | Installation of Earthing for Lighting Poles and Fedder Pillers for Street Lighting Network - (RD-L-9)-Z4-L09-SL | 2027-10-28 → 2027-10-26 (-2d) | 2027-10-31 → 2027-10-27 (-4d) | -163.02d → -161d |
| 2760 | **RHD4-02-002-Z4-L09-Telecommunications Network - TC** | 2027-02-11 → 2027-02-10 (-1d) | 2027-10-12 → 2027-10-09 (-3d) |  |
| 2761 | **RHD4-02-002-L09-(TC)-Telecommunications Ducts** | 2027-08-11 → 2027-08-09 (-2d) | 2027-10-12 → 2027-10-09 (-3d) |  |
| RHD4CZ4L09TC2100 | Excavation of HDPE Ducts for Telecom Network - (RD-L-9)-Z4-L09-TC | 2027-08-11 → 2027-08-09 (-2d) | 2027-09-02 → 2027-08-30 (-3d) | -197.02d → -195d |
| RHD4CZ4L09TC2200 | Installation of HDPE Ducts for Telecom Network - (RD-L-9)-Z4-L09-TC | 2027-09-02 → 2027-08-31 (-2d) | 2027-09-15 → 2027-09-12 (-3d) | -192.02d → -190d |
| RHD4CZ4L09TC2400 | Backfilling of HDPE Ducts for Telecom Network - (RD-L-9)-Z4-L09-TC | 2027-09-19 → 2027-09-16 (-3d) | 2027-10-12 → 2027-10-09 (-3d) | -195.02d → -193d |
| 2762 | **RHD4-02-002-L09-(TC)-Telecommunications Manholes** | 2027-09-02 → 2027-08-31 (-2d) | 2027-09-19 → 2027-09-15 (-4d) |  |
| RHD4CZ4L09TC5100 | Excavation for Manholes for Telecom Network - (RD-L-9)-Z4-L09-TC | 2027-09-02 → 2027-08-31 (-2d) | 2027-09-11 → 2027-09-07 (-4d) | -195.02d → -193d |
| RHD4CZ4L09TC5200 | Installation of Manholes for Telecom Network - (RD-L-9)-Z4-L09-TC | 2027-09-11 → 2027-09-08 (-3d) | 2027-09-19 → 2027-09-15 (-4d) | -195.02d → -193d |
| 2763 | **RHD4-02-002-L09-(TC)-Telecomminications Road Crossings** | 2027-02-11 → 2027-02-10 (-1d) | 2027-02-21 → 2027-02-18 (-3d) |  |
| RHD4CZ4L09TC3100 | Excavation for Road Crossings for Telecom Network - (RD-L-9)-Z4-L09-TC | 2027-02-11 → 2027-02-10 (-1d) | 2027-02-14 → 2027-02-11 (-3d) | -156.02d → -155d |
| RHD4CZ4L09TC3200 | Installation of Road Crossings for Telecom Network - (RD-L-9)-Z4-L09-TC | 2027-02-14 → 2027-02-13 (-1d) | 2027-02-16 → 2027-02-14 (-2d) | -156.02d → -155d |
| RHD4CZ4L09TC3300 | Pouring of Road Crossings for Telecom Network - (RD-L-9)-Z4-L09-TC | 2027-02-16 → 2027-02-15 (-1d) | 2027-02-18 → 2027-02-16 (-2d) | -156.02d → -155d |
| RHD4CZ4L09TC3400 | Backfilling of Road Crossings for Telecom Network - (RD-L-9)-Z4-L09-TC | 2027-02-18 → 2027-02-17 (-1d) | 2027-02-21 → 2027-02-18 (-3d) | -156.02d → -155d |

| ID | Task | Start | Finish | Complete | Total float |
| --- | --- | --- | --- | --- | --- |
| 2764 | **RHD4-02-002-Z4-L09-Information and Communication Technologies - ICT** | 2027-02-11 → 2027-02-10 (-1d) | 2027-11-06 → 2027-11-02 (-4d) |  |  |
| 2765 | **RHD4-02-002-L09-(ICT)-Information and Communication Technologies Ducts** | 2027-09-02 → 2027-08-31 (-2d) | 2027-11-06 → 2027-11-02 (-4d) |  |  |
| RHD4CZ4L09ICT2100 | Excavation of HDPE Ducts for ICT Network - (RD-L-9)-Z4-L09-ICT | 2027-09-02 → 2027-08-31 (-2d) | 2027-09-26 → 2027-09-21 (-5d) |  | -197.02d → -195d |
| RHD4CZ4L09ICT2200 | Installation of HDPE Ducts for ICT Network - (RD-L-9)-Z4-L09-ICT | 2027-09-26 → 2027-09-22 (-4d) | 2027-10-10 → 2027-10-06 (-4d) |  | -193.02d → -191d |
| RHD4CZ4L09ICT2400 | Backfilling of HDPE Ducts for ICT Network - (RD-L-9)-Z4-L09-ICT | 2027-10-14 → 2027-10-12 (-2d) | 2027-11-06 → 2027-11-02 (-4d) |  | -197.02d → -195d |
| 2766 | **RHD4-02-002-L09-(ICT)-Information and Communication Technologies Manholes** | 2027-09-26 → 2027-09-22 (-4d) | 2027-10-14 → 2027-10-11 (-3d) |  |  |
| RHD4CZ4L09ICT5100 | Excavation for Manholes for ICT Network - (RD-L-9)-Z4-L09-ICT | 2027-09-26 → 2027-09-22 (-4d) | 2027-10-05 → 2027-10-02 (-3d) |  | -197.02d → -195d |
| RHD4CZ4L09ICT5200 | Installation of Manholes for ICT Network - (RD-L-9)-Z4-L09-ICT | 2027-10-05 → 2027-10-03 (-2d) | 2027-10-14 → 2027-10-11 (-3d) |  | -197.02d → -195d |
| 2767 | **RHD4-02-002-L09-(ICT)-Information and Communication Technologies Road Crossings** | 2027-02-11 → 2027-02-10 (-1d) | 2027-02-21 → 2027-02-18 (-3d) |  |  |
| RHD4CZ4L09ICT3100 | Excavation for Road Crossings for ICT Network - (RD-L-9)-Z4-L09-ICT | 2027-02-11 → 2027-02-10 (-1d) | 2027-02-14 → 2027-02-11 (-3d) |  | -156.02d → -155d |
| RHD4CZ4L09ICT3200 | Installation of Road Crossings for ICT Network - (RD-L-9)-Z4-L09-ICT | 2027-02-14 → 2027-02-13 (-1d) | 2027-02-16 → 2027-02-14 (-2d) |  | -156.02d → -155d |
| RHD4CZ4L09ICT3300 | Pouring of Road Crossings for ICT Network - (RD-L-9)-Z4-L09-ICT | 2027-02-16 → 2027-02-15 (-1d) | 2027-02-18 → 2027-02-16 (-2d) |  | -156.02d → -155d |
| RHD4CZ4L09ICT3400 | Backfilling of Road Crossings for ICT Network - (RD-L-9)-Z4-L09-ICT | 2027-02-18 → 2027-02-17 (-1d) | 2027-02-21 → 2027-02-18 (-3d) |  | -156.02d → -155d |
| 2218 | **RHD4-02-002-Z4-C012** | 2027-02-11 → 2026-09-27 (-137d) | 2027-11-22 → 2027-11-18 (-4d) |  |  |
| 2397 | **RHD4-02-002-Z4-C012-Road Works - RD** | 2027-02-18 → 2026-09-27 (-144d) | 2027-11-22 → 2027-11-18 (-4d) |  |  |
| 2398 | **RHD4-02-002-C012-(RD)-Subgrade** | 2027-02-18 → 2027-02-17 (-1d) | 2027-03-14 → 2027-03-08 (-6d) |  |  |
| RHD4CZ4C012RD1100 | Supply, lay and compaction subgrade compacted thickness 300 mm for Roads - (RD-C-1 /2)-Z4-C012-RD | 2027-02-18 → 2027-02-17 (-1d) | 2027-03-14 → 2027-03-08 (-6d) |  | -189.02d → -188d |
| 2399 | **RHD4-02-002-C012-(RD)-Aggregate Base Course** | 2027-03-14 → 2026-09-27 (-168d) | 2027-03-28 → 2027-03-25 (-3d) |  |  |
| RHD4CZ4C012RD2100 | Supply, lay and compaction Aggregate base course compacted thickness 300 mmfor Roads - (RD-C-1 /2)-Z4-C012-RD | 2027-03-14 → 2026-09-27 A (-168d) | 2027-03-28 → 2027-03-25 (-3d) | 0% → 39% | -189.02d → -188d |
| 2400 | **RHD4-02-002-C012-(RD)-Bituminous base course Two Layers, including (MC1)&(RC2)** | 2027-03-28 → 2027-03-27 (-1d) | 2027-11-07 → 2027-11-03 (-4d) |  |  |
| RHD4CZ4C012RD3100 | Supply, lay and Asphaltic base course including Prime Coat (MC1) for 1st Layer - (RD-C-1 /2)-Z4-C012-RD | 2027-03-28 → 2027-03-27 (-1d) | 2027-04-03 → 2027-03-31 (-3d) |  | -189.02d → -188d |
| RHD4CZ4C012RD3200 | Supply, lay and Asphaltic base course including Tack Coat (RC2) for 2nd Layer - (RD-C-1 /2)-Z4-C012-RD | 2027-11-01 → 2027-10-30 (-2d) | 2027-11-07 → 2027-11-03 (-4d) |  | -188.02d → -186d |
| 2402 | **RHD4-02-002-C012-(RD)-Precast Concrete Curb** | 2027-11-07 → 2027-11-04 (-3d) | 2027-11-13 → 2027-11-09 (-4d) |  |  |
| RHD4CZ4C012RD5100 | Supply and installation Precast Concrete Kerb for Roads - (RD-C-1 /2)-Z4-C012-RD | 2027-11-07 → 2027-11-04 (-3d) | 2027-11-13 → 2027-11-09 (-4d) |  | -188.02d → -186d |
| 2405 | **RHD4-02-002-C012-(RD)-Traffic Signage** | 2027-11-13 → 2027-11-10 (-3d) | 2027-11-20 → 2027-11-16 (-4d) |  |  |
| RHD4CZ4C012RD8100 | Installation of Traffic Signage for Road Network - (RD-C-1 /2)-Z4-C012-RD | 2027-11-13 → 2027-11-10 (-3d) | 2027-11-20 → 2027-11-16 (-4d) |  | -188.02d → -186d |
| 2401 | **RHD4-02-002-C012-(RD)-Bituminous concrete wearing course including tack coat (RC2)** | 2027-11-13 → 2027-11-10 (-3d) | 2027-11-16 → 2027-11-13 (-3d) |  |  |
| RHD4CZ4C012RD4100 | Supply, lay and compaction Asphaltic wearing course including tack Coat (RC2)for Road Network - (RD-C-1 /2)-Z4-C012-RD | 2027-11-13 → 2027-11-10 (-3d) | 2027-11-16 → 2027-11-13 (-3d) |  | -126.02d → -124d |
| 2404 | **RHD4-02-002-C012-(RD)-Pavement Marking** | 2027-11-16 → 2027-11-14 (-2d) | 2027-11-22 → 2027-11-18 (-4d) |  |  |
| RHD4CZ4C012RD7100 | Pavement Markings for Road Network - (RD-C-1 /2)-Z4-C012-RD | 2027-11-16 → 2027-11-14 (-2d) | 2027-11-22 → 2027-11-18 (-4d) |  | -126.02d → -124d |
| 2323 | **RHD4-02-002-Z4-C012-Irrigation Network - IRR** | 2027-08-18 → 2027-08-16 (-2d) | 2027-09-11 → 2027-09-07 (-4d) |  |  |
| 6107 | **RHD4-02-002-C012-(IRR)-HDPE Pipes - 160 mm diameter** | 2027-08-18 → 2027-08-16 (-2d) | 2027-08-30 → 2027-08-26 (-4d) |  |  |
| RHD4CZ4C012IRR1100 | Excavation works for HDPE Pipline 160 mm - (RD-C-1 /2)-Z4-C012-IRR | 2027-08-18 → 2027-08-16 (-2d) | 2027-08-21 → 2027-08-17 (-4d) |  | -195.02d → -193d |
| RHD4CZ4C012IRR1200 | Bedding works for HDPE Pipline 160 mm - (RD-C-1 /2)-Z4-C012-IRR | 2027-08-21 → 2027-08-18 (-3d) | 2027-08-23 → 2027-08-19 (-4d) |  | -195.02d → -193d |
| RHD4CZ4C012IRR1300 | Installing for HDPE Pipline 160 mm - (RD-C-1 /2)-Z4-C012-IRR | 2027-08-23 → 2027-08-21 (-2d) | 2027-08-25 → 2027-08-22 (-3d) |  | -195.02d → -193d |
| RHD4CZ4C012IRR1400 | Primary Test for HDPE Pipline 160 mm - (RD-C-1 /2)-Z4-C012-IRR | 2027-08-25 → 2027-08-23 (-2d) | 2027-08-28 → 2027-08-24 (-4d) |  | -195.02d → -193d |
| RHD4CZ4C012IRR1500 | Backfilling and warning tape works for HDPE Pipline 160 mm - (RD-C-1 /2)-Z4-C012-IRR | 2027-08-28 → 2027-08-25 (-3d) | 2027-08-30 → 2027-08-26 (-4d) |  | -195.02d → -193d |
| 6111 | **RHD4-02-002-C012-(IRR)-HDPE Pipes - 315 mm diameter** | 2027-08-21 → 2027-08-18 (-3d) | 2027-09-08 → 2027-09-05 (-3d) |  |  |
| RHD4CZ4C012IRR1104 | Excavation works for HDPE Pipline 315 mm - (RD-C-1 /2)-Z4-C012-IRR | 2027-08-21 → 2027-08-18 (-3d) | 2027-08-25 → 2027-08-22 (-3d) |  | -191.02d → -189d |
| RHD4CZ4C012IRR1204 | Bedding works for HDPE Pipline 315 mm - (RD-C-1 /2)-Z4-C012-IRR | 2027-08-25 → 2027-08-23 (-2d) | 2027-08-29 → 2027-08-25 (-4d) |  | -190.02d → -188d |
| RHD4CZ4C012IRR1304 | Installing for HDPE Pipline 315 mm - (RD-C-1 /2)-Z4-C012-IRR | 2027-08-29 → 2027-08-26 (-3d) | 2027-09-02 → 2027-08-30 (-3d) |  | -190.02d → -188d |
| RHD4CZ4C012IRR1404 | Primary Test for HDPE Pipline 315 mm - (RD-C-1 /2)-Z4-C012-IRR | 2027-09-02 → 2027-08-31 (-2d) | 2027-09-05 → 2027-09-01 (-4d) |  | 219.98d → 222d |
| RHD4CZ4C012IRR1504 | Backfilling and warning tape works for HDPE Pipline 315 mm - (RD-C-1 /2)-Z4-C012-IRR | 2027-09-05 → 2027-09-02 (-3d) | 2027-09-08 → 2027-09-05 (-3d) |  | 219.98d → 222d |
| 6115 | **RHD4-02-002-C012-(IRR)-Gate Valves (Direct Buried)** | 2027-08-31 → 2027-08-29 (-2d) | 2027-09-05 → 2027-09-01 (-4d) |  |  |
| RHD4CZ4C012IRR3100 | Installation for Direct Buried Gate Valves - (RD-C-1 /2)-Z4-C012-IRR | 2027-08-31 → 2027-08-29 (-2d) | 2027-09-02 → 2027-08-30 (-3d) |  | -173.02d → -171d |
| RHD4CZ4C012IRR3200 | Stem and Service box for Direct Buried Gate Valves - (RD-C-1 /2)-Z4-C012-IRR | 2027-09-02 → 2027-08-31 (-2d) | 2027-09-05 → 2027-09-01 (-4d) |  | -173.02d → -171d |
| 6116 | **RHD4-02-002-C012-(IRR)-Butterfly Valve Chamber** | 2027-08-30 → 2027-08-28 (-2d) | 2027-09-08 → 2027-09-05 (-3d) |  |  |
| RHD4CZ4C012IRR2100 | Excavation and Bedding for Butterfly Valve Chamber for Irrigation Network - (RD-C-1 /2)-Z4-C012-IRR | 2027-08-30 → 2027-08-28 (-2d) | 2027-09-01 → 2027-08-29 (-3d) |  | -195.02d → -193d |
| RHD4CZ4C012IRR2200 | PC works for Butterfly Valve Chamber for Irrigation Network - (RD-C-1 /2)-Z4-C012-IRR | 2027-09-01 → 2027-08-30 (-2d) | 2027-09-04 → 2027-08-31 (-4d) |  | -195.02d → -193d |
| RHD4CZ4C012IRR2300 | Installation for Butterfly Valve Chamber for Irrigation Network - (RD-C-1 /2)-Z4-C012-IRR | 2027-09-04 → 2027-09-01 (-3d) | 2027-09-06 → 2027-09-02 (-4d) |  | -195.02d → -193d |
| RHD4CZ4C012IRR2400 | Backfilling works for Butterfly Valve Chamber for Irrigation Network - (RD-C-1 /2)-Z4-C012-IRR | 2027-09-06 → 2027-09-04 (-2d) | 2027-09-08 → 2027-09-05 (-3d) |  | -195.02d → -193d |
| 6117 | **RHD4-02-002-C012-(IRR)-Butterfly Valves** | 2027-09-02 → 2027-08-31 (-2d) | 2027-09-11 → 2027-09-07 (-4d) |  |  |
| RHD4CZ4C012IRR3101 | Installation for Butterfly Valves for Irrigation Network - (RD-C-1 /2)-Z4-C012-IRR | 2027-09-02 → 2027-08-31 (-2d) | 2027-09-05 → 2027-09-01 (-4d) |  | -190.02d → -188d |
| RHD4CZ4C012IRR3201 | Stem and Service box for Butterfly Valves for Irrigation Network - (RD-C-1 /2)-Z4-C012-IRR | 2027-09-08 → 2027-09-06 (-2d) | 2027-09-11 → 2027-09-07 (-4d) |  | -193.02d → -191d |
| 2357 | **RHD4-02-002-Z4-C012-Medium Voltage Network - MV** | 2027-06-16 → 2027-06-14 (-2d) | 2027-07-15 → 2027-07-12 (-3d) |  |  |
| 2358 | **RHD4-02-002-C012-(MV)-Medium Voltage cable trench** | 2027-06-16 → 2027-06-14 (-2d) | 2027-06-28 → 2027-06-24 (-4d) |  |  |
| RHD4CZ4C012MV1100 | Excavation for Medium Voltage Trench - (RD-C-1 /2)-Z4-C012-MV | 2027-06-16 → 2027-06-14 (-2d) | 2027-06-22 → 2027-06-19 (-3d) |  | -150.02d → -148d |
| RHD4CZ4C012MV1200 | Trench Backfilling for Medium Voltage Network - (RD-C-1 /2)-Z4-C012-MV | 2027-06-22 → 2027-06-20 (-2d) | 2027-06-28 → 2027-06-24 (-4d) |  | -150.02d → -148d |
| 1982 | **RHD4-02-002-C012-(MV)-Medium Voltage cables 3Cx 50 mm²** | 2027-06-22 → 2027-06-20 (-2d) | 2027-07-15 → 2027-07-12 (-3d) |  |  |
| RHD4CZ4C012MV3101 | Installation of Medium Voltage Cables 3Cx 50 mm² - (RD-C-1 /2)-Z4-C012-MV | 2027-06-22 → 2027-06-20 (-2d) | 2027-06-24 → 2027-06-21 (-3d) |  | -110.02d → -108d |
| RHD4CZ4C012MV3301 | Testing of Medium Voltage Cables 3Cx 50 mm² - (RD-C-1 /2)-Z4-C012-MV | 2027-06-24 → 2027-06-22 (-2d) | 2027-06-27 → 2027-06-23 (-4d) |  | -110.02d → -108d |
| RHD4CZ4C012MV3401 | Termination of Medium Voltage Cables 3Cx 50 mm² - (RD-C-1 /2)-Z4-C012-MV | 2027-07-13 → 2027-07-11 (-2d) | 2027-07-15 → 2027-07-12 (-3d) |  | -124.02d → -122d |
| 2360 | **RHD4-02-002-C012-(MV)-Medium Voltage cables 3Cx 500 mm²** | 2027-06-22 → 2027-06-20 (-2d) | 2027-07-08 → 2027-07-05 (-3d) |  |  |
| RHD4CZ4C012MV3100 | Installation of Medium Voltage Cables 3Cx 500 mm² - (RD-C-1 /2)-Z4-C012-MV | 2027-06-22 → 2027-06-20 (-2d) | 2027-06-29 → 2027-06-26 (-3d) |  | -132.02d → -130d |
| RHD4CZ4C012MV3200 | Joints Installation of Medium Voltage Cables 3Cx 500 mm² - (RD-C-1 /2)-Z4-C012-MV | 2027-06-29 → 2027-06-27 (-2d) | 2027-07-01 → 2027-06-28 (-3d) |  | -132.02d → -130d |
| RHD4CZ4C012MV3300 | Testing of Medium Voltage Cables 3Cx 500 mm² - (RD-C-1 /2)-Z4-C012-MV | 2027-07-01 → 2027-06-29 (-2d) | 2027-07-08 → 2027-07-05 (-3d) |  | -132.02d → -130d |
| 1984 | **RHD4-02-002-C012-(MV)-Unit Substations** | 2027-06-28 → 2027-06-26 (-2d) | 2027-07-13 → 2027-07-10 (-3d) |  |  |
| RHD4CZ4C012MV5100 | Excavation for Unit Substations for Medium Voltage Network - (RD-C-1 /2)-Z4-C012-MV | 2027-06-28 → 2027-06-26 (-2d) | 2027-06-30 → 2027-06-27 (-3d) |  | -124.02d → -122d |
| RHD4CZ4C012MV5200 | Concrete Base Placement for Unit Substations for Medium Voltage Network - (RD-C-1 /2)-Z4-C012-MV | 2027-06-30 → 2027-06-28 (-2d) | 2027-07-03 → 2027-06-29 (-4d) |  | -124.02d → -122d |
| RHD4CZ4C012MV5300 | Installation for Fences and doors for Medium Voltage Network - (RD-C-1 /2)-Z4-C012-MV | 2027-07-03 → 2027-06-30 (-3d) | 2027-07-08 → 2027-07-05 (-3d) |  | -124.02d → -122d |

| ID | Task | Start | Finish | Complete | Total float |
| --- | --- | --- | --- | --- | --- |
| RHD4CZ4C012MV5400 | Installation for Unit Substations for Medium Voltage Network - (RD-C-1 /2)-Z4-C012-MV | 2027-07-08 → 2027-07-06 (-2d) | 2027-07-13 → 2027-07-10 (-3d) |  | -124.02d → -122d |
| 2364 | **RHD4-02-002-Z4-C012-Low Voltage Network - LV** | 2027-07-08 → 2027-07-06 (-2d) | 2027-10-12 → 2027-10-09 (-3d) |  |  |
| 2367 | **RHD4-02-002-C012-(LV)-Low Voltage cables** | 2027-07-08 → 2027-07-06 (-2d) | 2027-07-22 → 2027-07-19 (-3d) |  |  |
| RHD4CZ4C012LV3100 | Excavation for Low Voltage Cables for Low Voltage Network - (RD-C-1 /2)-Z4-C012-LV | 2027-07-08 → 2027-07-06 (-2d) | 2027-07-13 → 2027-07-10 (-3d) |  | -132.02d → -130d |
| RHD4CZ4C012LV3200 | Cable Laying of Low Voltage Cables for Low Voltage Network - (RD-C-1 /2)-Z4-C012-LV | 2027-07-13 → 2027-07-11 (-2d) | 2027-07-17 → 2027-07-13 (-4d) |  | -132.02d → -130d |
| RHD4CZ4C012LV3300 | Warning tape and Backfill for Low Voltage Cables for Low Voltage Network - (RD-C-1 /2)-Z4-C012-LV | 2027-07-17 → 2027-07-14 (-3d) | 2027-07-20 → 2027-07-17 (-3d) |  | -132.02d → -130d |
| RHD4CZ4C012LV3400 | Testing of Low Voltage Cables for Low Voltage Network - (RD-C-1 /2)-Z4-C012-LV | 2027-07-20 → 2027-07-18 (-2d) | 2027-07-22 → 2027-07-19 (-3d) |  | -132.02d → -130d |
| 4259 | **RHD4-02-002-C012-(LV)-Low Voltage Distribution Pillars** | 2027-07-22 → 2027-07-20 (-2d) | 2027-10-12 → 2027-10-09 (-3d) |  |  |
| RHD4CZ4C012LV4100 | Leveling for Distribution Pillars for Low Voltage Network - (RD-C-1 /2)-Z4-C012-LV | 2027-07-22 → 2027-07-20 (-2d) | 2027-07-25 → 2027-07-21 (-4d) |  | -132.02d → -130d |
| RHD4CZ4C012LV4200 | Lean Concrete for Distribution Pillars for Low Voltage Network - (RD-C-1 /2)-Z4-C012-LV | 2027-07-25 → 2027-07-22 (-3d) | 2027-07-27 → 2027-07-24 (-3d) |  | -132.02d → -130d |
| RHD4CZ4C012LV4300 | Installation of Distribution Pillars for Low Voltage Network - (RD-C-1 /2)-Z4-C012-LV | 2027-10-10 → 2027-10-07 (-3d) | 2027-10-12 → 2027-10-09 (-3d) |  | -195.02d → -193d |
| 2370 | **RHD4-02-002-Z4-C012-Street Lighting Network - SL** | 2027-06-28 → 2027-06-26 (-2d) | 2027-10-10 → 2027-10-06 (-4d) |  |  |
| 2371 | **RHD4-02-002-C012-(SL)-Street Lighting duct banks** | 2027-09-08 → 2027-09-06 (-2d) | 2027-09-18 → 2027-09-14 (-4d) |  |  |
| RHD4CZ4C012SL2100 | Excavation of Duct Banks for Street Lighting Network - (RD-C-1 /2)-Z4-C012-SL | 2027-09-08 → 2027-09-06 (-2d) | 2027-09-11 → 2027-09-07 (-4d) |  | -195.02d → -193d |
| RHD4CZ4C012SL2200 | Installation of Duct Banks for Street Lighting Network - (RD-C-1 /2)-Z4-C012-SL | 2027-09-11 → 2027-09-08 (-3d) | 2027-09-13 → 2027-09-09 (-4d) |  | -195.02d → -193d |
| RHD4CZ4C012SL2300 | Pouring of Duct Banks for Street Lighting Network - (RD-C-1 /2)-Z4-C012-SL | 2027-09-13 → 2027-09-11 (-2d) | 2027-09-15 → 2027-09-12 (-3d) |  | -195.02d → -193d |
| RHD4CZ4C012SL2400 | Backfilling of Duct Banks for Street Lighting Network - (RD-C-1 /2)-Z4-C012-SL | 2027-09-15 → 2027-09-13 (-2d) | 2027-09-18 → 2027-09-14 (-4d) |  | -195.02d → -193d |
| 2373 | **RHD4-02-002-C012-(SL)-Street Lighting cables** | 2027-06-28 → 2027-06-26 (-2d) | 2027-07-11 → 2027-07-07 (-4d) |  |  |
| RHD4CZ4C012SL3100 | Excavation for Street Lighting Cables for Street Lighting Network - (RD-C-1 /2)-Z4-C012-SL | 2027-06-28 → 2027-06-26 (-2d) | 2027-07-01 → 2027-06-28 (-3d) |  | -127.02d → -125d |
| RHD4CZ4C012SL3200 | Cable Laying of Street Lighting Cables for Street Lighting Network - (RD-C-1 /2)-Z4-C012-SL | 2027-07-01 → 2027-06-29 (-2d) | 2027-07-05 → 2027-07-01 (-4d) |  | -127.02d → -125d |
| RHD4CZ4C012SL3300 | Warning tape and Backfill for Street Lighting Cables for Street Lighting Network - (RD-C-1 /2)-Z4-C012-SL | 2027-07-05 → 2027-07-03 (-2d) | 2027-07-08 → 2027-07-05 (-3d) |  | -127.02d → -125d |
| RHD4CZ4C012SL3400 | Testing of Street Lighting Cables for Street Lighting Network - (RD-C-1 /2)-Z4-C012-SL | 2027-07-08 → 2027-07-06 (-2d) | 2027-07-11 → 2027-07-07 (-4d) |  | -127.02d → -125d |
| 2374 | **RHD4-02-002-C012-(SL)-Street Lighting Poles** | 2027-09-18 → 2027-09-15 (-3d) | 2027-09-30 → 2027-09-27 (-3d) |  |  |
| RHD4CZ4C012SL1100 | Excavation for RC Base for Lighting Poles for Street Lighting Network - (RD-C-1 /2)-Z4-C012-SL | 2027-09-18 → 2027-09-15 (-3d) | 2027-09-20 → 2027-09-16 (-4d) |  | -195.02d → -193d |
| RHD4CZ4C012SL1200 | Installation for RC Base for Lighting Poles for Street Lighting Network - (RD-C-1 /2)-Z4-C012-SL | 2027-09-20 → 2027-09-18 (-2d) | 2027-09-22 → 2027-09-19 (-3d) |  | -195.02d → -193d |
| RHD4CZ4C012SL1300 | Backfill for RC Base for Lighting Poles for Street Lighting Network - (RD-C-1 /2)-Z4-C012-SL | 2027-09-22 → 2027-09-20 (-2d) | 2027-09-26 → 2027-09-21 (-5d) |  | -195.02d → -193d |
| RHD4CZ4C012SL1400 | Installation for Lighting Poles for Street Lighting Network - (RD-C-1 /2)-Z4-C012-SL | 2027-09-26 → 2027-09-22 (-4d) | 2027-09-28 → 2027-09-25 (-3d) |  | -195.02d → -193d |
| RHD4CZ4C012SL1500 | Luminaire Installation for Lighting Poles for Street Lighting Network - (RD-C-1 /2)-Z4-C012-SL | 2027-09-28 → 2027-09-26 (-2d) | 2027-09-30 → 2027-09-27 (-3d) |  | -195.02d → -193d |
| 5023 | **RHD4-02-002-C012-(SL)-Street Lighting Feeder Pillars** | 2027-09-30 → 2027-09-28 (-2d) | 2027-10-07 → 2027-10-04 (-3d) |  |  |
| RHD4CZ4C012SL4100 | Leveling for Distribution Pillars for Street Lighting Network - (RD-C-1 /2)-Z4-C012-SL | 2027-09-30 → 2027-09-28 (-2d) | 2027-10-03 → 2027-09-29 (-4d) |  | -195.02d → -193d |
| RHD4CZ4C012SL4200 | Lean Concrete for Distribution Pillars for Street Lighting Network - (RD-C-1 /2)-Z4-C012-SL | 2027-10-03 → 2027-09-30 (-3d) | 2027-10-05 → 2027-10-02 (-3d) |  | -195.02d → -193d |
| RHD4CZ4C012SL4300 | Installation of Distribution Pillars for Street Lighting Network - (RD-C-1 /2)-Z4-C012-SL | 2027-10-05 → 2027-10-03 (-2d) | 2027-10-07 → 2027-10-04 (-3d) |  | -195.02d → -193d |
| 5024 | **RHD4-02-002-C012-(SL)-Street Lighting Earthing System** | 2027-10-07 → 2027-10-05 (-2d) | 2027-10-10 → 2027-10-06 (-4d) |  |  |
| RHD4CZ4C012SL6100 | Installation of Earthing for Lighting Poles and Fedder Pillers for Street Lighting Network - (RD-C-1 /2)-Z4-C012-SL | 2027-10-07 → 2027-10-05 (-2d) | 2027-10-10 → 2027-10-06 (-4d) |  | -195.02d → -193d |
| 2372 | **RHD4-02-002-C012-(SL)-Street Lighting Drawpit** | 2027-09-20 → 2027-09-18 (-2d) | 2027-09-26 → 2027-09-21 (-5d) |  |  |
| RHD4CZ4C012SL5100 | Excavation of Drawpit size 600x600x900mm for Street Lighting Network - (RD-C-1 /2)-Z4-C012-SL | 2027-09-20 → 2027-09-18 (-2d) | 2027-09-22 → 2027-09-19 (-3d) |  | -188.02d → -186d |
| RHD4CZ4C012SL5200 | Installation of Drawpit size 600x600x900mm for Street Lighting Network - (RD-C-1 /2)-Z4-C012-SL | 2027-09-22 → 2027-09-20 (-2d) | 2027-09-26 → 2027-09-21 (-5d) |  | -188.02d → -186d |
| 2382 | **RHD4-02-002-Z4-C012-Telecommunications Network - TC** | 2027-09-26 → 2027-09-22 (-4d) | 2027-10-07 → 2027-10-04 (-3d) |  |  |
| 2383 | **RHD4-02-002-C012-(TC)-Telecommunications Ducts** | 2027-09-26 → 2027-09-22 (-4d) | 2027-10-07 → 2027-10-04 (-3d) |  |  |
| RHD4CZ4C012TC2100 | Excavation of HDPE Ducts for Telecom Network - (RD-C-1 /2)-Z4-C012-TC | 2027-09-26 → 2027-09-22 (-4d) | 2027-09-29 → 2027-09-26 (-3d) |  | -188.02d → -186d |
| RHD4CZ4C012TC2200 | Installation of HDPE Ducts for Telecom Network - (RD-C-1 /2)-Z4-C012-TC | 2027-09-29 → 2027-09-27 (-2d) | 2027-10-04 → 2027-09-30 (-4d) |  | -174.02d → -172d |
| RHD4CZ4C012TC2400 | Backfilling of HDPE Ducts for Telecom Network - (RD-C-1 /2)-Z4-C012-TC | 2027-10-04 → 2027-10-02 (-2d) | 2027-10-07 → 2027-10-04 (-3d) |  | -157.02d → -155d |
| 2384 | **RHD4-02-002-C012-(TC)-Telecommunications Manholes** | 2027-09-29 → 2027-09-27 (-2d) | 2027-10-04 → 2027-09-30 (-4d) |  |  |
| RHD4CZ4C012TC5100 | Excavation for Manholes for Telecom Network - (RD-C-1 /2)-Z4-C012-TC | 2027-09-29 → 2027-09-27 (-2d) | 2027-10-02 → 2027-09-28 (-4d) |  | -176.02d → -174d |
| RHD4CZ4C012TC5200 | Installation of Manholes for Telecom Network - (RD-C-1 /2)-Z4-C012-TC | 2027-10-02 → 2027-09-29 (-3d) | 2027-10-04 → 2027-09-30 (-4d) |  | -176.02d → -174d |
| 2386 | **RHD4-02-002-Z4-C012-Information and Communication Technologies - ICT** | 2027-02-11 → 2027-02-10 (-1d) | 2027-11-01 → 2027-10-28 (-4d) |  |  |
| 2387 | **RHD4-02-002-C012-(ICT)-Information and Communication Technologies Ducts** | 2027-09-29 → 2027-09-27 (-2d) | 2027-11-01 → 2027-10-28 (-4d) |  |  |
| RHD4CZ4C012ICT2100 | Excavation of HDPE Ducts for ICT Network - (RD-C-1 /2)-Z4-C012-ICT | 2027-09-29 → 2027-09-27 (-2d) | 2027-10-09 → 2027-10-05 (-4d) |  | -188.02d → -186d |
| RHD4CZ4C012ICT2200 | Installation of HDPE Ducts for ICT Network - (RD-C-1 /2)-Z4-C012-ICT | 2027-10-09 → 2027-10-06 (-3d) | 2027-10-23 → 2027-10-19 (-4d) |  | -188.02d → -186d |
| RHD4CZ4C012ICT2400 | Backfilling of HDPE Ducts for ICT Network - (RD-C-1 /2)-Z4-C012-ICT | 2027-10-23 → 2027-10-20 (-3d) | 2027-11-01 → 2027-10-28 (-4d) |  | -188.02d → -186d |
| 2388 | **RHD4-02-002-C012-(ICT)-Information and Communication Technologies Manholes** | 2027-10-09 → 2027-10-06 (-3d) | 2027-10-13 → 2027-10-10 (-3d) |  |  |
| RHD4CZ4C012ICT5100 | Excavation for Manholes for ICT Network - (RD-C-1 /2)-Z4-C012-ICT | 2027-10-09 → 2027-10-06 (-3d) | 2027-10-11 → 2027-10-07 (-4d) |  | -180.02d → -178d |
| RHD4CZ4C012ICT5200 | Installation of Manholes for ICT Network - (RD-C-1 /2)-Z4-C012-ICT | 2027-10-11 → 2027-10-09 (-2d) | 2027-10-13 → 2027-10-10 (-3d) |  | -180.02d → -178d |
| 2389 | **RHD4-02-002-C012-(ICT)-Information and Communication Technologies Road Crossings** | 2027-02-11 → 2027-02-10 (-1d) | 2027-02-21 → 2027-02-18 (-3d) |  |  |
| RHD4CZ4C012ICT3100 | Excavation for Road Crossings for ICT Network - (RD-C-1 /2)-Z4-C012-ICT | 2027-02-11 → 2027-02-10 (-1d) | 2027-02-14 → 2027-02-11 (-3d) |  | -189.02d → -188d |
| RHD4CZ4C012ICT3200 | Installation of Road Crossings for ICT Network - (RD-C-1 /2)-Z4-C012-ICT | 2027-02-14 → 2027-02-13 (-1d) | 2027-02-16 → 2027-02-14 (-2d) |  | -189.02d → -188d |
| RHD4CZ4C012ICT3300 | Pouring of Road Crossings for ICT Network - (RD-C-1 /2)-Z4-C012-ICT | 2027-02-16 → 2027-02-15 (-1d) | 2027-02-18 → 2027-02-16 (-2d) |  | -189.02d → -188d |
| RHD4CZ4C012ICT3400 | Backfilling of Road Crossings for ICT Network - (RD-C-1 /2)-Z4-C012-ICT | 2027-02-18 → 2027-02-17 (-1d) | 2027-02-21 → 2027-02-18 (-3d) |  | -189.02d → -188d |
| 7324 | **RHD4-02-002-Z8** |  | 2028-11-02 → 2028-10-28 (-5d) |  |  |
| 7703 | **RHD4-02-002-Z8-A011** |  | 2028-04-03 → 2028-04-01 (-2d) |  |  |
| 7882 | **RHD4-02-002-Z8-A011-Road Works - RD** |  | 2028-04-03 → 2028-04-01 (-2d) |  |  |
| 7884 | **RHD4-02-002-A011-(RD)-Aggregate Base Course** |  | 2027-03-15 → 2027-02-28 (-15d) |  |  |
| RHD4CZ8A011RD2100 | Supply, lay and compaction Aggregate base course compacted thickness 300 mmfor Roads - (RD-A-1 /1)-Z8-A011-RD |  | 2027-03-15 → 2027-02-28 (-15d) | 50% → 85% | -172.02d → -163d |
| 7885 | **RHD4-02-002-A011-(RD)-Bituminous base course Two Layers, including (MC1)&(RC2)** | 2027-03-15 → 2026-11-10 (-125d) | 2028-03-15 → 2028-03-09 (-6d) |  |  |
| RHD4CZ8A011RD3100 | Supply, lay and Asphaltic base course including Prime Coat (MC1) for 1st Layer - (RD-A-1 /1)-Z8-A011-RD | 2027-03-15 → 2026-11-10 A (-125d) | 2027-03-22 → 2027-03-07 (-15d) | 0% → 40% | -153.02d → -144d |
| RHD4CZ8A011RD3200 | Supply, lay and Asphaltic base course including Tack Coat (RC2) for 2nd Layer - (RD-A-1 /1)-Z8-A011-RD | 2028-03-08 → 2028-03-04 (-4d) | 2028-03-15 → 2028-03-09 (-6d) |  | -111.02d → -107d |
| 7887 | **RHD4-02-002-A011-(RD)-Precast Concrete Curb** | 2028-03-15 → 2028-03-11 (-4d) | 2028-03-20 → 2028-03-14 (-6d) |  |  |
| RHD4CZ8A011RD5100 | Supply and installation Precast Concrete Kerb for Roads - (RD-A-1 /1)-Z8-A011-RD | 2028-03-15 → 2028-03-11 (-4d) | 2028-03-20 → 2028-03-14 (-6d) |  | -111.02d → -107d |
| 7890 | **RHD4-02-002-A011-(RD)-Traffic Signage** | 2028-03-20 → 2028-03-15 (-5d) | 2028-03-27 → 2028-03-21 (-6d) |  |  |
| RHD4CZ8A011RD8100 | Installation of Traffic Signage for Road Network - (RD-A-1 /1)-Z8-A011-RD | 2028-03-20 → 2028-03-15 (-5d) | 2028-03-27 → 2028-03-21 (-6d) |  | -98.02d → -94d |

| ID | Task | Start | Finish | Total float |
| --- | --- | --- | --- | --- |
| 7886 | **RHD4-02-002-A011-(RD)-Bituminous concrete wearing course including tack coat (RC2)** | 2028-03-20 → 2028-03-15 (-5d) | 2028-03-23 → 2028-03-18 (-5d) |  |
| RHD4CZ8A011RD4100 | Supply, lay and compaction Asphaltic wearing course including tack Coat (RC2)for Road Network - (RD-A-1 /1)-Z8-A011-RD | 2028-03-20 → 2028-03-15 (-5d) | 2028-03-23 → 2028-03-18 (-5d) | -111.02d → -107d |
| 7889 | **RHD4-02-002-A011-(RD)-Pavement Marking** | 2028-03-28 → 2028-03-27 (-1d) | 2028-04-03 → 2028-04-01 (-2d) |  |
| RHD4CZ8A011RD7100 | Pavement Markings for Road Network - (RD-A-1 /1)-Z8-A011-RD | 2028-03-28 → 2028-03-27 (-1d) | 2028-04-03 → 2028-04-01 (-2d) | -115.02d → -114d |
| 7707 | **RHD4-02-002-Z8-A011-Storm Network - ST** |  | 2027-06-05 → 2027-05-24 (-12d) |  |
| 7725 | **RHD4-02-002-A011-(ST)-MH Works - 1500 mm diameter** |  | 2027-05-05 → 2027-05-03 (-2d) |  |
| RHD4CZ8A011ST3301 | MH Ring and C.Slab works and Backfilling works for MH 1500 mm - (RD-A-1 /1)-Z8-A011-ST |  | 2027-04-25 → 2027-04-22 (-3d) | -110.02d → -109d |
| RHD4CZ8A011ST3401 | Steel Cover for MH 1500 mm - (RD-A-1 /1)-Z8-A011-ST | 2027-04-25 → 2027-04-24 (-1d) | 2027-04-29 → 2027-04-27 (-2d) | -110.02d → -109d |
| RHD4CZ8A011ST3501 | Finishing, Benching, Testing works for MH 1500 mm - (RD-A-1 /1)-Z8-A011-ST | 2027-04-29 → 2027-04-28 (-1d) | 2027-05-05 → 2027-05-03 (-2d) | -110.02d → -109d |
| 3754 | **RHD4-02-002-A011-(ST)-MH Works - 2000 mm diameter** |  | 2027-05-06 → 2027-05-04 (-2d) |  |
| RHD4CZ8A011ST3202 | Installation of Base for MH 2000 mm - (RD-A-1 /1)-Z8-A011-ST |  | 2027-04-24 → 2027-04-21 (-3d) | -117.02d → -116d |
| RHD4CZ8A011ST3302 | MH Ring and C.Slab works and Backfilling works for MH 2000 mm - (RD-A-1 /1)-Z8-A011-ST |  | 2027-04-28 → 2027-04-26 (-2d) | -117.02d → -116d |
| RHD4CZ8A011ST3402 | Steel Cover for MH 2000 mm - (RD-A-1 /1)-Z8-A011-ST | 2027-04-28 → 2027-04-27 (-1d) | 2027-05-02 → 2027-04-29 (-3d) | -117.02d → -116d |
| RHD4CZ8A011ST3502 | Finishing, Benching, Testing works for MH 2000 mm - (RD-A-1 /1)-Z8-A011-ST | 2027-05-02 → 2027-05-01 (-1d) | 2027-05-06 → 2027-05-04 (-2d) | -117.02d → -116d |
| 6393 | **RHD4-02-002-A011-(ST)-GRP Pipes - 1300 mm diameter** |  | 2027-04-10 → 2027-04-07 (-3d) |  |
| RHD4CZ8A011ST1409 | Primary Test for GRP Pipe Line 1300 mm - (RD-A-1 /1)-Z8-A011-ST | 2027-04-07 → 2027-04-06 (-1d) | 2027-04-10 → 2027-04-07 (-3d) | -117.02d → -116d |
| 7724 | **RHD4-02-002-A011-(ST)-MH Works - 1200 mm diameter** |  | 2027-04-28 → 2027-04-26 (-2d) |  |
| RHD4CZ8A011ST3400 | Steel Cover for MH 1200 mm - (RD-A-1 /1)-Z8-A011-ST | 2027-04-19 → 2027-04-18 (-1d) | 2027-04-24 → 2027-04-21 (-3d) | -100.02d → -99d |
| RHD4CZ8A011ST3500 | Finishing, Benching, Testing works for MH 1200 mm - (RD-A-1 /1)-Z8-A011-ST | 2027-04-24 → 2027-04-22 (-2d) | 2027-04-28 → 2027-04-26 (-2d) | -100.02d → -99d |
| 7712 | **RHD4-02-002-A011-(ST)-GRP Pipes - 800 mm diameter** |  | 2027-04-10 → 2027-04-07 (-3d) |  |
| RHD4CZ8A011ST1404 | Primary Test for GRP Pipe Line 800 mm - (RD-A-1 /1)-Z8-A011-ST | 2027-04-07 → 2027-04-06 (-1d) | 2027-04-10 → 2027-04-07 (-3d) | -117.02d → -116d |
| 7711 | **RHD4-02-002-A011-(ST)-GRP Pipes - 700 mm diameter** |  | 2027-04-10 → 2027-04-07 (-3d) |  |
| RHD4CZ8A011ST1403 | Primary Test for GRP Pipe Line 700 mm - (RD-A-1 /1)-Z8-A011-ST | 2027-04-07 → 2027-04-06 (-1d) | 2027-04-10 → 2027-04-07 (-3d) | -117.02d → -116d |
| 7710 | **RHD4-02-002-A011-(ST)-GRP Pipes - 600 mm diameter** |  | 2027-04-10 → 2027-04-07 (-3d) |  |
| RHD4CZ8A011ST1402 | Primary Test for GRP Pipe Line 600 mm - (RD-A-1 /1)-Z8-A011-ST | 2027-04-07 → 2027-04-06 (-1d) | 2027-04-10 → 2027-04-07 (-3d) | -117.02d → -116d |
| 7709 | **RHD4-02-002-A011-(ST)-GRP Pipes - 500 mm diameter** |  | 2027-04-10 → 2027-04-07 (-3d) |  |
| RHD4CZ8A011ST1401 | Primary Test for GRP Pipe Line 500 mm - (RD-A-1 /1)-Z8-A011-ST | 2027-04-07 → 2027-04-06 (-1d) | 2027-04-10 → 2027-04-07 (-3d) | -153.02d → -152d |
| 7708 | **RHD4-02-002-A011-(ST)-GRP Pipes - 400 mm diameter** |  | 2027-04-21 → 2027-04-19 (-2d) |  |
| RHD4CZ8A011ST1100 | Excavation works for GRP Pipe Line 400 mm - (RD-A-1 /1)-Z8-A011-ST |  | 2027-04-12 → 2027-04-10 (-2d) | -153.02d → -152d |
| RHD4CZ8A011ST1200 | Bedding works for GRP Pipe Line 400 mm - (RD-A-1 /1)-Z8-A011-ST |  | 2027-04-14 → 2027-04-12 (-2d) | -122.02d → -121d |
| RHD4CZ8A011ST1300 | Installing for GRP Pipe Line 400 mm - (RD-A-1 /1)-Z8-A011-ST |  | 2027-04-17 → 2027-04-14 (-3d) | -122.02d → -121d |
| RHD4CZ8A011ST1500 | Backfilling and warning tape works for GRP Pipe Line 400 mm - (RD-A-1 /1)-Z8-A011-ST |  | 2027-04-21 → 2027-04-19 (-2d) | -122.02d → -121d |
| RHD4CZ8A011ST1400 | Primary Test for GRP Pipe Line 400 mm - (RD-A-1 /1)-Z8-A011-ST | 2027-04-17 → 2027-04-15 (-2d) | 2027-04-19 → 2027-04-17 (-2d) | -122.02d → -121d |
| 7722 | **RHD4-02-002-A011-(ST)-UPVC Pipes - 300 mm diameter** |  | 2027-06-05 → 2027-05-24 (-12d) |  |
| RHD4CZ8A011ST2100 | Excavation works for UPVC Pipe Line 300 mm - (RD-A-1 /1)-Z8-A011-ST |  | 2027-04-19 → 2027-04-17 (-2d) | -153.02d → -152d |
| RHD4CZ8A011ST2200 | Bedding works for UPVC Pipe Line 300 mm - (RD-A-1 /1)-Z8-A011-ST |  | 2027-04-25 → 2027-04-22 (-3d) | -127.02d → -126d |
| RHD4CZ8A011ST2300 | Installing for UPVC Pipe Line 300 mm - (RD-A-1 /1)-Z8-A011-ST |  | 2027-05-02 → 2027-04-29 (-3d) | -127.02d → -126d |
| RHD4CZ8A011ST2500 | Backfilling and warning tape works for UPVC Pipe Line 300 mm - (RD-A-1 /1)-Z8-A011-ST |  | 2027-06-05 → 2027-05-24 (-12d) | -141.02d → -132d |
| RHD4CZ8A011ST2400 | Primary Test for UPVC Pipe Line 300 mm - (RD-A-1 /1)-Z8-A011-ST | 2027-05-02 → 2027-05-01 (-1d) | 2027-05-06 → 2027-05-04 (-2d) | -127.02d → -126d |
| 7730 | **RHD4-02-002-A011-(ST)-Concrete Encasement** | 2027-05-25 → 2027-05-10 (-15d) | 2027-05-27 → 2027-05-11 (-16d) |  |
| RHD4CZ8A011ST6100 | Pipe Encasement for Storm Pipelines - (RD-A-1 /1)-Z8-A011-ST | 2027-05-25 → 2027-05-10 (-15d) | 2027-05-27 → 2027-05-11 (-16d) | -141.02d → -132d |
| 7731 | **RHD4-02-002-Z8-A011-Catch Basin - ST** |  | 2027-08-22 → 2027-08-07 (-15d) |  |
| 7732 | **RHD4-02-002-A011-(ST)-Single Catch Basin Works** |  | 2027-08-22 → 2027-08-07 (-15d) |  |
| RHD4CZ8A011ST7100 | Excavation works for Single Catch Basin - (RD-A-1 /1)-Z8-A011-ST |  | 2027-04-19 → 2027-04-17 (-2d) | -153.02d → -152d |
| RHD4CZ8A011ST7200 | PC Blinding, Installation and Pipe connection for Single Catch Basin - (RD-A-1 /1)-Z8-A011-ST |  | 2027-04-26 → 2027-04-24 (-2d) | -153.02d → -152d |
| RHD4CZ8A011ST7300 | Rings & C.Slab & Final Backfill for Single Catch Basin - (RD-A-1 /1)-Z8-A011-ST |  | 2027-05-04 → 2027-05-02 (-2d) | -153.02d → -152d |
| RHD4CZ8A011ST7400 | Steel Cover for Single Catch Basin - (RD-A-1 /1)-Z8-A011-ST | 2027-08-02 → 2027-07-19 (-14d) | 2027-08-09 → 2027-07-25 (-15d) | -129.02d → -117d |
| RHD4CZ8A011ST7500 | Finishing and Insulation works for Single Catch Basin - (RD-A-1 /1)-Z8-A011-ST | 2027-08-09 → 2027-07-26 (-14d) | 2027-08-22 → 2027-08-07 (-15d) | -129.02d → -117d |
| 6409 | **RHD4-02-002-A011-(ST)-Double Catch Basin Works** | 2027-04-19 → 2027-04-18 (-1d) | 2027-05-01 → 2027-04-28 (-3d) |  |
| RHD4CZ8A011ST8100 | Excavation works for Double Catch Basin - (RD-A-1 /1)-Z8-A011-ST | 2027-04-19 → 2027-04-18 (-1d) | 2027-04-21 → 2027-04-19 (-2d) | -124.02d → -123d |
| RHD4CZ8A011ST8200 | PC Blinding, Installation and Pipe connection for Double Catch Basin - (RD-A-1 /1)-Z8-A011-ST | 2027-04-21 → 2027-04-20 (-1d) | 2027-04-24 → 2027-04-21 (-3d) | -124.02d → -123d |
| RHD4CZ8A011ST8300 | Rings & C.Slab & Final Backfillfor Double Catch Basin - (RD-A-1 /1)-Z8-A011-ST | 2027-04-24 → 2027-04-22 (-2d) | 2027-04-26 → 2027-04-24 (-2d) | -124.02d → -123d |
| RHD4CZ8A011ST8400 | Steel Cover for Double Catch Basin - (RD-A-1 /1)-Z8-A011-ST | 2027-04-26 → 2027-04-25 (-1d) | 2027-04-28 → 2027-04-26 (-2d) | -124.02d → -123d |
| RHD4CZ8A011ST8500 | Finishing and Insulation works for Double Catch Basin - (RD-A-1 /1)-Z8-A011-ST | 2027-04-28 → 2027-04-27 (-1d) | 2027-05-01 → 2027-04-28 (-3d) | -124.02d → -123d |
| 7378 | **RHD4-02-002-Z8-A011-Sewage Network - SW** |  | 2027-07-26 → 2027-07-14 (-12d) |  |
| 1895 | **RHD4-02-002-A011-(SW)-GRP Pipes - 500 mm diameter** |  | 2027-06-09 → 2027-05-29 (-11d) |  |
| RHD4CZ8A011SW1402 | Primary Test for GRP Pipe Line 500 mm - (RD-A-1 /1)-Z8-A011-SW | 2027-06-05 → 2027-05-25 (-11d) | 2027-06-07 → 2027-05-26 (-12d) | -111.02d → -102d |
| RHD4CZ8A011SW1502 | Backfilling and warning tape works for GRP Pipe Line 500 mm - (RD-A-1 /1)-Z8-A011-SW | 2027-06-07 → 2027-05-27 (-11d) | 2027-06-09 → 2027-05-29 (-11d) | -111.02d → -102d |
| 4542 | **RHD4-02-002-A011-(SW)-GRP Pipes - 400 mm diameter** |  | 2027-07-04 → 2027-06-22 (-12d) |  |
| RHD4CZ8A011SW1101 | Excavation works for GRP Pipe Line 400 mm - (RD-A-1 /1)-Z8-A011-SW |  | 2027-06-10 → 2027-05-30 (-11d) | -141.02d → -132d |
| RHD4CZ8A011SW1201 | Bedding works for GRP Pipe Line 400 mm - (RD-A-1 /1)-Z8-A011-SW |  | 2027-06-16 → 2027-06-05 (-11d) | -127.02d → -118d |
| RHD4CZ8A011SW1301 | Installing for GRP Pipe Line 400 mm - (RD-A-1 /1)-Z8-A011-SW |  | 2027-06-22 → 2027-06-10 (-12d) | -127.02d → -118d |
| RHD4CZ8A011SW1501 | Backfilling and warning tape works for GRP Pipe Line 400 mm - (RD-A-1 /1)-Z8-A011-SW |  | 2027-07-04 → 2027-06-22 (-12d) | -127.02d → -118d |
| RHD4CZ8A011SW1401 | Primary Test for GRP Pipe Line 400 mm - (RD-A-1 /1)-Z8-A011-SW | 2027-06-22 → 2027-06-12 (-10d) | 2027-06-28 → 2027-06-16 (-12d) | -127.02d → -118d |
| 957 | **RHD4-02-002-A011-(SW)-MH Works - 1200 mm diameter with Back drop** |  | 2027-06-14 → 2027-06-02 (-12d) |  |
| RHD4CZ8A011SW3301 | MH Ring and C.Slab works and Backfilling works for MH 1200 mm - (RD-A-1 /1)-Z8-A011-SW |  | 2027-06-08 → 2027-05-27 (-12d) | -110.02d → -101d |
| RHD4CZ8A011SW3401 | Steel Cover for MH 1200 mm - (RD-A-1 /1)-Z8-A011-SW | 2027-06-08 → 2027-05-29 (-10d) | 2027-06-10 → 2027-05-30 (-11d) | -110.02d → -101d |
| RHD4CZ8A011SW3501 | Finishing, Benching, Testing works for MH 1200 mm - (RD-A-1 /1)-Z8-A011-SW | 2027-06-10 → 2027-05-31 (-10d) | 2027-06-14 → 2027-06-02 (-12d) | -110.02d → -101d |
| 3794 | **RHD4-02-002-A011-(SW)-MH Works - 1200 mm diameter** |  | 2027-07-26 → 2027-07-14 (-12d) |  |
| RHD4CZ8A011SW3200 | Installation of Base for MH 1200 mm - (RD-A-1 /1)-Z8-A011-SW |  | 2027-06-20 → 2027-06-08 (-12d) | -133.02d → -124d |

| ID | Task | Start | Finish | Complete | Total float |
| --- | --- | --- | --- | --- | --- |
| RHD4CZ8A011SW3300 | MH Ring and C.Slab works and Backfilling works for MH 1200 mm - (RD-A-1 /1)-Z8-A011-SW | 2027-06-20 → 2027-06-09 (-11d) | 2027-07-05 → 2027-06-23 (-12d) |  | -133.02d → -124d |
| RHD4CZ8A011SW3400 | Steel Cover for MH 1200 mm - (RD-A-1 /1)-Z8-A011-SW | 2027-07-05 → 2027-06-24 (-11d) | 2027-07-11 → 2027-06-29 (-12d) |  | -133.02d → -124d |
| RHD4CZ8A011SW3500 | Finishing, Benching, Testing works for MH 1200 mm - (RD-A-1 /1)-Z8-A011-SW | 2027-07-11 → 2027-06-30 (-11d) | 2027-07-26 → 2027-07-14 (-12d) |  | -133.02d → -124d |
| 3790 | **RHD4-02-002-A011-(SW)-UPVC Pipes - 200 mm diameter** |  | 2027-06-14 → 2027-06-02 (-12d) |  |  |
| RHD4CZ8A011SW2400 | Primary Test for UPVC Pipe Line 200 mm - (RD-A-1 /1)-Z8-A011-SW | 2027-06-10 → 2027-05-31 (-10d) | 2027-06-14 → 2027-06-02 (-12d) |  | -120.02d → -111d |
| 7793 | **RHD4-02-002-Z8-A011-Potable Network - PT** | 2027-06-10 → 2026-10-31 (-222d) | 2027-08-09 → 2027-07-25 (-15d) |  |  |
| 7797 | **RHD4-02-002-A011-(PT)-HDPE Pipes - 400 mm diameter** | 2027-06-10 → 2026-10-31 (-222d) | 2027-07-21 → 2027-07-06 (-15d) |  |  |
| RHD4CZ8A011PT1103 | Excavation works for HDPE Pipline 400 mm - (RD-A-1 /1)-Z8-A011-PT | 2027-06-10 → 2026-10-31 A (-222d) | 2027-06-19 → 2027-06-07 (-12d) | 0% → 83% | -141.02d → -132d |
| RHD4CZ8A011PT1203 | Bedding works for HDPE Pipline 400 mm - (RD-A-1 /1)-Z8-A011-PT | 2027-06-19 → 2026-11-02 A (-229d) | 2027-06-27 → 2027-06-15 (-12d) | 0% → 10% | -141.02d → -129d |
| RHD4CZ8A011PT1303 | Installing for HDPE Pipline 400 mm - (RD-A-1 /1)-Z8-A011-PT | 2027-06-27 → 2026-11-04 A (-235d) | 2027-07-07 → 2027-06-26 (-11d) | 0% → 74% | -141.02d → -129d |
| RHD4CZ8A011PT1503 | Backfilling and warning tape works for HDPE Pipline 400 mm - (RD-A-1 /1)-Z8-A011-PT | 2027-07-14 → 2026-11-07 A (-249d) | 2027-07-21 → 2027-07-06 (-15d) | 0% → 92% | -141.02d → -129d |
| RHD4CZ8A011PT1403 | Primary Test for HDPE Pipline 400 mm - (RD-A-1 /1)-Z8-A011-PT | 2027-07-07 → 2027-06-27 (-10d) | 2027-07-14 → 2027-07-03 (-11d) |  | -141.02d → -129d |
| 6102 | **RHD4-02-002-A011-(PT)-Air Valve Chambers** | 2027-07-24 → 2027-07-10 (-14d) | 2027-08-02 → 2027-07-18 (-15d) |  |  |
| RHD4CZ8A011PT2102 | Excavation and Bedding for Air Valve Chambers for Potable Water Network - (RD-A-1 /1)-Z8-A011-PT | 2027-07-24 → 2027-07-10 (-14d) | 2027-07-26 → 2027-07-11 (-15d) |  | -139.02d → -127d |
| RHD4CZ8A011PT2202 | PC works for Air Valve Chambers for Potable Water Network - (RD-A-1 /1)-Z8-A011-PT | 2027-07-26 → 2027-07-12 (-14d) | 2027-07-28 → 2027-07-13 (-15d) |  | -139.02d → -127d |
| RHD4CZ8A011PT2302 | Installation for Air Valve Chambers for Potable Water Network - (RD-A-1 /1)-Z8-A011-PT | 2027-07-28 → 2027-07-14 (-14d) | 2027-07-31 → 2027-07-15 (-16d) |  | -139.02d → -127d |
| RHD4CZ8A011PT2402 | Backfilling works for Air Valve Chambers for Potable Water Network - (RD-A-1 /1)-Z8-A011-PT | 2027-07-31 → 2027-07-17 (-14d) | 2027-08-02 → 2027-07-18 (-15d) |  | -139.02d → -127d |
| 6103 | **RHD4-02-002-A011-(PT)-Air Valves** | 2027-07-31 → 2027-07-17 (-14d) | 2027-08-04 → 2027-07-20 (-15d) |  |  |
| RHD4CZ8A011PT3103 | Installation for Air Valves for Potable Water Network - (RD-A-1 /1)-Z8-A011-PT | 2027-07-31 → 2027-07-17 (-14d) | 2027-08-02 → 2027-07-18 (-15d) |  | -139.02d → -127d |
| RHD4CZ8A011PT3203 | Stem and Service box for Air Valves for Potable Water Network - (RD-A-1 /1)-Z8-A011-PT | 2027-08-02 → 2027-07-19 (-14d) | 2027-08-04 → 2027-07-20 (-15d) |  | -139.02d → -127d |
| 7801 | **RHD4-02-002-A011-(PT)-Butterfly Valves** | 2027-07-26 → 2027-07-12 (-14d) | 2027-08-02 → 2027-07-18 (-15d) |  |  |
| RHD4CZ8A011PT3101 | Installation for Butterfly Valves for Potable Water Network - (RD-A-1 /1)-Z8-A011-PT | 2027-07-26 → 2027-07-12 (-14d) | 2027-07-28 → 2027-07-13 (-15d) |  | -139.02d → -127d |
| RHD4CZ8A011PT3201 | Stem and Service box for Butterfly Valves for Potable Water Network - (RD-A-1 /1)-Z8-A011-PT | 2027-07-31 → 2027-07-17 (-14d) | 2027-08-02 → 2027-07-18 (-15d) |  | -141.02d → -129d |
| 7802 | **RHD4-02-002-A011-(PT)-Wash out Valve Chambers** | 2027-07-21 → 2027-07-07 (-14d) | 2027-08-09 → 2027-07-25 (-15d) |  |  |
| RHD4CZ8A011PT2101 | Excavation and Bedding for Wash out Valve Chambers for Potable Water Network - (RD-A-1 /1)-Z8-A011-PT | 2027-07-21 → 2027-07-07 (-14d) | 2027-07-24 → 2027-07-08 (-16d) |  | -139.02d → -127d |
| RHD4CZ8A011PT2201 | PC works for Wash out Valve Chambers for Potable Water Network - (RD-A-1 /1)-Z8-A011-PT | 2027-08-02 → 2027-07-19 (-14d) | 2027-08-04 → 2027-07-20 (-15d) |  | -141.02d → -129d |
| RHD4CZ8A011PT2301 | Installation for Wash out Valve Chambers for Potable Water Network - (RD-A-1 /1)-Z8-A011-PT | 2027-08-04 → 2027-07-21 (-14d) | 2027-08-07 → 2027-07-22 (-16d) |  | -141.02d → -129d |
| RHD4CZ8A011PT2401 | Backfilling works for Wash out Valve Chambers for Potable Water Network - (RD-A-1 /1)-Z8-A011-PT | 2027-08-07 → 2027-07-24 (-14d) | 2027-08-09 → 2027-07-25 (-15d) |  | -141.02d → -129d |
| 7803 | **RHD4-02-002-A011-(PT)-Wash out Valves** | 2027-07-28 → 2027-07-14 (-14d) | 2027-08-02 → 2027-07-18 (-15d) |  |  |
| RHD4CZ8A011PT3102 | Installation for Wash out Valves for Potable Water Network - (RD-A-1 /1)-Z8-A011-PT | 2027-07-28 → 2027-07-14 (-14d) | 2027-07-31 → 2027-07-15 (-16d) |  | -132.02d → -120d |
| RHD4CZ8A011PT3202 | Stem and Service box for Wash out Valves for Potable Water Network - (RD-A-1 /1)-Z8-A011-PT | 2027-07-31 → 2027-07-17 (-14d) | 2027-08-02 → 2027-07-18 (-15d) |  | -132.02d → -120d |
| 7806 | **RHD4-02-002-A011-(PT)-Fire Hydrant** | 2027-07-21 → 2027-07-07 (-14d) | 2027-08-08 → 2027-07-24 (-15d) |  |  |
| RHD4CZ8A011PT4100 | Excavation and Bedding and Pipe Installation for Fire Hydrant - (RD-A-1 /1)-Z8-A011-PT | 2027-07-21 → 2027-07-07 (-14d) | 2027-07-26 → 2027-07-11 (-15d) |  | -140.02d → -128d |
| RHD4CZ8A011PT4200 | Valve Installation for Fire Hydrant - (RD-A-1 /1)-Z8-A011-PT | 2027-07-26 → 2027-07-12 (-14d) | 2027-07-29 → 2027-07-14 (-15d) |  | -140.02d → -128d |
| RHD4CZ8A011PT4300 | Stem for Fire Hydrant - (RD-A-1 /1)-Z8-A011-PT | 2027-07-29 → 2027-07-15 (-14d) | 2027-08-02 → 2027-07-18 (-15d) |  | -140.02d → -128d |
| RHD4CZ8A011PT4400 | Fire Installation for Fire Hydrant - (RD-A-1 /1)-Z8-A011-PT | 2027-08-02 → 2027-07-19 (-14d) | 2027-08-05 → 2027-07-21 (-15d) |  | -140.02d → -128d |
| RHD4CZ8A011PT4500 | Protection Barriers for Fire Hydrant - (RD-A-1 /1)-Z8-A011-PT | 2027-08-05 → 2027-07-22 (-14d) | 2027-08-08 → 2027-07-24 (-15d) |  | -140.02d → -128d |
| 7800 | **RHD4-02-002-A011-(PT)-Butterfly Valve Chamber** | 2027-07-21 → 2027-07-07 (-14d) | 2027-07-31 → 2027-07-15 (-16d) |  |  |
| RHD4CZ8A011PT2100 | Excavation and Bedding for Butterfly Valve Chamber for Potable Water Network - (RD-A-1 /1)-Z8-A011-PT | 2027-07-21 → 2027-07-07 (-14d) | 2027-07-24 → 2027-07-08 (-16d) |  | -141.02d → -129d |
| RHD4CZ8A011PT2200 | PC works for Butterfly Valve Chamber for Potable Water Network - (RD-A-1 /1)-Z8-A011-PT | 2027-07-24 → 2027-07-10 (-14d) | 2027-07-26 → 2027-07-11 (-15d) |  | -141.02d → -129d |
| RHD4CZ8A011PT2300 | Installation for Butterfly Valve Chamber for Potable Water Network - (RD-A-1 /1)-Z8-A011-PT | 2027-07-26 → 2027-07-12 (-14d) | 2027-07-28 → 2027-07-13 (-15d) |  | -141.02d → -129d |
| RHD4CZ8A011PT2400 | Backfilling works for Butterfly Valve Chamber for Potable Water Network - (RD-A-1 /1)-Z8-A011-PT | 2027-07-28 → 2027-07-14 (-14d) | 2027-07-31 → 2027-07-15 (-16d) |  | -141.02d → -129d |
| 1755 | **RHD4-02-002-Z8-A011-Irrigation Network - IRR** | 2027-06-19 → 2027-06-08 (-11d) | 2027-07-29 → 2027-07-18 (-11d) |  |  |
| 6107 | **RHD4-02-002-A011-(IRR)-HDPE Pipes - 160 mm diameter** | 2027-06-19 → 2027-06-08 (-11d) | 2027-06-30 → 2027-06-19 (-11d) |  |  |
| RHD4CZ8A011IRR1100 | Excavation works for HDPE Pipline 160 mm - (RD-A-1 /1)-Z8-A011-IRR | 2027-06-19 → 2027-06-08 (-11d) | 2027-06-21 → 2027-06-09 (-12d) |  | -141.02d → -132d |
| RHD4CZ8A011IRR1200 | Bedding works for HDPE Pipline 160 mm - (RD-A-1 /1)-Z8-A011-IRR | 2027-06-21 → 2027-06-10 (-11d) | 2027-06-23 → 2027-06-12 (-11d) |  | -115.02d → -106d |
| RHD4CZ8A011IRR1300 | Installing for HDPE Pipline 160 mm - (RD-A-1 /1)-Z8-A011-IRR | 2027-06-23 → 2027-06-13 (-10d) | 2027-06-26 → 2027-06-14 (-12d) |  | -115.02d → -106d |
| RHD4CZ8A011IRR1400 | Primary Test for HDPE Pipline 160 mm - (RD-A-1 /1)-Z8-A011-IRR | 2027-06-26 → 2027-06-15 (-11d) | 2027-06-28 → 2027-06-16 (-12d) |  | -112.02d → -103d |
| RHD4CZ8A011IRR1500 | Backfilling and warning tape works for HDPE Pipline 160 mm - (RD-A-1 /1)-Z8-A011-IRR | 2027-06-28 → 2027-06-17 (-11d) | 2027-06-30 → 2027-06-19 (-11d) |  | -112.02d → -103d |
| 6115 | **RHD4-02-002-A011-(IRR)-Gate Valves (Direct Buried)** | 2027-07-07 → 2027-06-27 (-10d) | 2027-07-14 → 2027-07-03 (-11d) |  |  |
| RHD4CZ8A011IRR3100 | Installation for Direct Buried Gate Valves - (RD-A-1 /1)-Z8-A011-IRR | 2027-07-07 → 2027-06-27 (-10d) | 2027-07-11 → 2027-06-29 (-12d) |  | -121.02d → -112d |
| RHD4CZ8A011IRR3200 | Stem and Service box for Direct Buried Gate Valves - (RD-A-1 /1)-Z8-A011-IRR | 2027-07-11 → 2027-06-30 (-11d) | 2027-07-14 → 2027-07-03 (-11d) |  | -121.02d → -112d |
| 6116 | **RHD4-02-002-A011-(IRR)-Butterfly Valve Chamber** | 2027-06-21 → 2027-06-10 (-11d) | 2027-06-30 → 2027-06-19 (-11d) |  |  |
| RHD4CZ8A011IRR2100 | Excavation and Bedding for Butterfly Valve Chamber for Irrigation Network - (RD-A-1 /1)-Z8-A011-IRR | 2027-06-21 → 2027-06-10 (-11d) | 2027-06-23 → 2027-06-12 (-11d) |  | -117.02d → -108d |
| RHD4CZ8A011IRR2200 | PC works for Butterfly Valve Chamber for Irrigation Network - (RD-A-1 /1)-Z8-A011-IRR | 2027-06-23 → 2027-06-13 (-10d) | 2027-06-26 → 2027-06-14 (-12d) |  | -117.02d → -108d |
| RHD4CZ8A011IRR2300 | Installation for Butterfly Valve Chamber for Irrigation Network - (RD-A-1 /1)-Z8-A011-IRR | 2027-06-26 → 2027-06-15 (-11d) | 2027-06-28 → 2027-06-16 (-12d) |  | -117.02d → -108d |
| RHD4CZ8A011IRR2400 | Backfilling works for Butterfly Valve Chamber for Irrigation Network - (RD-A-1 /1)-Z8-A011-IRR | 2027-06-28 → 2027-06-17 (-11d) | 2027-06-30 → 2027-06-19 (-11d) |  | -117.02d → -108d |
| 6117 | **RHD4-02-002-A011-(IRR)-Butterfly Valves** | 2027-07-07 → 2027-06-27 (-10d) | 2027-07-12 → 2027-06-30 (-12d) |  |  |
| RHD4CZ8A011IRR3101 | Installation for Butterfly Valves for Irrigation Network - (RD-A-1 /1)-Z8-A011-IRR | 2027-07-07 → 2027-06-27 (-10d) | 2027-07-10 → 2027-06-28 (-12d) |  | -125.02d → -116d |
| RHD4CZ8A011IRR3201 | Stem and Service box for Butterfly Valves for Irrigation Network - (RD-A-1 /1)-Z8-A011-IRR | 2027-07-10 → 2027-06-29 (-11d) | 2027-07-12 → 2027-06-30 (-12d) |  | -125.02d → -116d |
| 1769 | **RHD4-02-002-A011-(IRR)-Air Valve Chamber** | 2027-06-21 → 2027-06-10 (-11d) | 2027-06-30 → 2027-06-19 (-11d) |  |  |
| RHD4CZ8A011IRR2102 | Excavation and Bedding for Valve Chamber for Irrigation Network - (RD-A-1 /1)-Z8-A011-IRR | 2027-06-21 → 2027-06-10 (-11d) | 2027-06-23 → 2027-06-12 (-11d) |  | -126.02d → -117d |
| RHD4CZ8A011IRR2202 | PC works for Valve Chamber for Irrigation Network - (RD-A-1 /1)-Z8-A011-IRR | 2027-06-23 → 2027-06-13 (-10d) | 2027-06-26 → 2027-06-14 (-12d) |  | -126.02d → -117d |
| RHD4CZ8A011IRR2302 | Installation for Valve Chamber for Irrigation Network - (RD-A-1 /1)-Z8-A011-IRR | 2027-06-26 → 2027-06-15 (-11d) | 2027-06-28 → 2027-06-16 (-12d) |  | -126.02d → -117d |
| RHD4CZ8A011IRR2402 | Backfilling works for Valve Chamber for Irrigation Network - (RD-A-1 /1)-Z8-A011-IRR | 2027-06-28 → 2027-06-17 (-11d) | 2027-06-30 → 2027-06-19 (-11d) |  | -126.02d → -117d |
| 1770 | **RHD4-02-002-A011-(IRR)-Air Valves** | 2027-06-28 → 2027-06-17 (-11d) | 2027-07-03 → 2027-06-21 (-12d) |  |  |
| RHD4CZ8A011IRR3103 | Installation for Air Valves for Irrigation Network - (RD-A-1 /1)-Z8-A011-IRR | 2027-06-28 → 2027-06-17 (-11d) | 2027-06-30 → 2027-06-19 (-11d) |  | -126.02d → -117d |
| RHD4CZ8A011IRR3203 | Stem and Service box for Air Valves for Irrigation Network - (RD-A-1 /1)-Z8-A011-IRR | 2027-06-30 → 2027-06-20 (-10d) | 2027-07-03 → 2027-06-21 (-12d) |  | -126.02d → -117d |
| 8762 | **RHD4-02-002-A011-(IRR)-HDPE Pipes - 500 mm diameter** | 2027-06-21 → 2027-06-10 (-11d) | 2027-07-29 → 2027-07-18 (-11d) |  |  |
| RHD4CZ8A011IRR1107 | Excavation works for HDPE Pipline 500 mm - (RD-A-1 /1)-Z8-A011-IRR | 2027-06-21 → 2027-06-10 (-11d) | 2027-06-30 → 2027-06-19 (-11d) |  | -139.02d → -130d |

| ID | Task | Start | Finish | Total float |
| --- | --- | --- | --- | --- |
| RHD4CZ8A011IRR1207 | Bedding works for HDPE Pipline 500 mm - (RD-A-1 /1)-Z8-A011-IRR | 2027-06-30 → 2027-06-20 (-10d) | 2027-07-08 → 2027-06-27 (-11d) | -139.02d → -130d |
| RHD4CZ8A011IRR1307 | Installing for HDPE Pipline 500 mm - (RD-A-1 /1)-Z8-A011-IRR | 2027-07-08 → 2027-06-28 (-10d) | 2027-07-18 → 2027-07-06 (-12d) | -139.02d → -130d |
| RHD4CZ8A011IRR1407 | Primary Test for HDPE Pipline 500 mm - (RD-A-1 /1)-Z8-A011-IRR | 2027-07-18 → 2027-07-07 (-11d) | 2027-07-21 → 2027-07-10 (-11d) | -139.02d → -130d |
| RHD4CZ8A011IRR1507 | Backfilling and warning tape works for HDPE Pipline 500 mm - (RD-A-1 /1)-Z8-A011-IRR | 2027-07-21 → 2027-07-11 (-10d) | 2027-07-29 → 2027-07-18 (-11d) | -139.02d → -130d |
| 3651 | **RHD4-02-002-A011-(IRR)-HDPE Pipes - 250 mm diameter** | 2027-06-30 → 2027-06-20 (-10d) | 2027-07-12 → 2027-06-30 (-12d) |  |
| RHD4CZ8A011IRR1103 | Excavation works for HDPE Pipline 250 mm - (RD-A-1 /1)-Z8-A011-IRR | 2027-06-30 → 2027-06-20 (-10d) | 2027-07-03 → 2027-06-21 (-12d) | -125.02d → -116d |
| RHD4CZ8A011IRR1203 | Bedding works for HDPE Pipline 250 mm - (RD-A-1 /1)-Z8-A011-IRR | 2027-07-03 → 2027-06-22 (-11d) | 2027-07-05 → 2027-06-23 (-12d) | -125.02d → -116d |
| RHD4CZ8A011IRR1303 | Installing for HDPE Pipline 250 mm - (RD-A-1 /1)-Z8-A011-IRR | 2027-07-05 → 2027-06-24 (-11d) | 2027-07-07 → 2027-06-26 (-11d) | -125.02d → -116d |
| RHD4CZ8A011IRR1403 | Primary Test for HDPE Pipline 250 mm - (RD-A-1 /1)-Z8-A011-IRR | 2027-07-07 → 2027-06-27 (-10d) | 2027-07-10 → 2027-06-28 (-12d) | -125.02d → -116d |
| RHD4CZ8A011IRR1503 | Backfilling and warning tape works for HDPE Pipline 250 mm - (RD-A-1 /1)-Z8-A011-IRR | 2027-07-10 → 2027-06-29 (-11d) | 2027-07-12 → 2027-06-30 (-12d) | -125.02d → -116d |
| 7842 | **RHD4-02-002-Z8-A011-Medium Voltage Network - MV** | 2027-03-22 → 2027-03-08 (-14d) | 2027-08-15 → 2027-08-11 (-4d) |  |
| 7843 | **RHD4-02-002-A011-(MV)-Medium Voltage cable trench** | 2027-06-28 → 2027-06-26 (-2d) | 2027-08-01 → 2027-07-28 (-4d) |  |
| RHD4CZ8A011MV1100 | Excavation for Medium Voltage Trench - (RD-A-1 /1)-Z8-A011-MV | 2027-06-28 → 2027-06-26 (-2d) | 2027-07-06 → 2027-07-03 (-3d) | -150.02d → -148d |
| RHD4CZ8A011MV1200 | Trench Backfilling for Medium Voltage Network - (RD-A-1 /1)-Z8-A011-MV | 2027-07-24 → 2027-07-21 (-3d) | 2027-08-01 → 2027-07-28 (-4d) | -150.02d → -148d |
| 7844 | **RHD4-02-002-A011-(MV)-Medium Voltage duct banks** | 2027-03-22 → 2027-03-08 (-14d) | 2027-05-25 → 2027-05-09 (-16d) |  |
| RHD4CZ8A011MV2100 | Excavation of Duct Banks for Medium Voltage Network - (RD-A-1 /1)-Z8-A011-MV | 2027-03-22 → 2027-03-08 (-14d) | 2027-04-05 → 2027-03-24 (-12d) | -141.02d → -132d |
| RHD4CZ8A011MV2200 | Installation of Duct Banks for Medium Voltage Network - (RD-A-1 /1)-Z8-A011-MV | 2027-04-05 → 2027-03-25 (-11d) | 2027-04-26 → 2027-04-14 (-12d) | -141.02d → -132d |
| RHD4CZ8A011MV2300 | Pouring of Duct Banks for Medium Voltage Network - (RD-A-1 /1)-Z8-A011-MV | 2027-04-26 → 2027-04-15 (-11d) | 2027-05-10 → 2027-04-28 (-12d) | -141.02d → -132d |
| RHD4CZ8A011MV2400 | Backfilling of Duct Banks for Medium Voltage Network - (RD-A-1 /1)-Z8-A011-MV | 2027-05-10 → 2027-04-29 (-11d) | 2027-05-25 → 2027-05-09 (-16d) | -141.02d → -132d |
| 7845 | **RHD4-02-002-A011-(MV)-Medium Voltage cables 3Cx 500 mm²** | 2027-07-06 → 2027-07-04 (-2d) | 2027-08-15 → 2027-08-11 (-4d) |  |
| RHD4CZ8A011MV3100 | Installation of Medium Voltage Cables 3Cx 500 mm² - (RD-A-1 /1)-Z8-A011-MV | 2027-07-06 → 2027-07-04 (-2d) | 2027-07-18 → 2027-07-14 (-4d) | -150.02d → -148d |
| RHD4CZ8A011MV3200 | Joints Installation of Medium Voltage Cables 3Cx 500 mm² - (RD-A-1 /1)-Z8-A011-MV | 2027-07-18 → 2027-07-15 (-3d) | 2027-07-24 → 2027-07-20 (-4d) | -150.02d → -148d |
| RHD4CZ8A011MV3300 | Testing of Medium Voltage Cables 3Cx 500 mm² - (RD-A-1 /1)-Z8-A011-MV | 2027-08-01 → 2027-07-29 (-3d) | 2027-08-12 → 2027-08-09 (-3d) | -150.02d → -148d |
| RHD4CZ8A011MV3400 | Termination of Medium Voltage Cables 3Cx 500 mm² - (RD-A-1 /1)-Z8-A011-MV | 2027-08-12 → 2027-08-10 (-2d) | 2027-08-15 → 2027-08-11 (-4d) | -150.02d → -148d |
| 7846 | **RHD4-02-002-A011-(MV)-Medium Voltage cables 3Cx 50 mm²** | 2027-07-06 → 2027-07-04 (-2d) | 2027-08-10 → 2027-08-07 (-3d) |  |
| RHD4CZ8A011MV3101 | Installation of Medium Voltage Cables 3Cx 50 mm² - (RD-A-1 /1)-Z8-A011-MV | 2027-07-06 → 2027-07-04 (-2d) | 2027-07-08 → 2027-07-05 (-3d) | -137.02d → -135d |
| RHD4CZ8A011MV3301 | Testing of Medium Voltage Cables 3Cx 50 mm² - (RD-A-1 /1)-Z8-A011-MV | 2027-08-01 → 2027-07-29 (-3d) | 2027-08-03 → 2027-07-31 (-3d) | -142.02d → -140d |
| RHD4CZ8A011MV3401 | Termination of Medium Voltage Cables 3Cx 50 mm² - (RD-A-1 /1)-Z8-A011-MV | 2027-08-08 → 2027-08-05 (-3d) | 2027-08-10 → 2027-08-07 (-3d) | -146.02d → -144d |
| 7848 | **RHD4-02-002-A011-(MV)-Unit Substations** | 2027-07-24 → 2027-07-21 (-3d) | 2027-08-08 → 2027-08-04 (-4d) |  |
| RHD4CZ8A011MV5100 | Excavation for Unit Substations for Medium Voltage Network - (RD-A-1 /1)-Z8-A011-MV | 2027-07-24 → 2027-07-21 (-3d) | 2027-07-26 → 2027-07-22 (-4d) | -146.02d → -144d |
| RHD4CZ8A011MV5200 | Concrete Base Placement for Unit Substations for Medium Voltage Network - (RD-A-1 /1)-Z8-A011-MV | 2027-07-26 → 2027-07-24 (-2d) | 2027-07-28 → 2027-07-25 (-3d) | -146.02d → -144d |
| RHD4CZ8A011MV5300 | Installation for Fences and doors for Medium Voltage Network - (RD-A-1 /1)-Z8-A011-MV | 2027-07-28 → 2027-07-26 (-2d) | 2027-08-03 → 2027-07-31 (-3d) | -146.02d → -144d |
| RHD4CZ8A011MV5400 | Installation for Unit Substations for Medium Voltage Network - (RD-A-1 /1)-Z8-A011-MV | 2027-08-03 → 2027-08-01 (-2d) | 2027-08-08 → 2027-08-04 (-4d) | -146.02d → -144d |
| 7849 | **RHD4-02-002-Z8-A011-Low Voltage Network - LV** | 2027-07-29 → 2027-07-19 (-10d) | 2027-09-08 → 2027-09-02 (-6d) |  |
| 7850 | **RHD4-02-002-A011-(LV)-Low Voltage duct banks** | 2027-07-29 → 2027-07-19 (-10d) | 2027-08-22 → 2027-08-10 (-12d) |  |
| RHD4CZ8A011LV2100 | Excavation of Duct Banks for Low Voltage Network - (RD-A-1 /1)-Z8-A011-LV | 2027-07-29 → 2027-07-19 (-10d) | 2027-08-04 → 2027-07-24 (-11d) | -139.02d → -130d |
| RHD4CZ8A011LV2200 | Installation of Duct Banks for Low Voltage Network - (RD-A-1 /1)-Z8-A011-LV | 2027-08-04 → 2027-07-25 (-10d) | 2027-08-10 → 2027-07-29 (-12d) | -139.02d → -130d |
| RHD4CZ8A011LV2300 | Pouring of Duct Banks for Low Voltage Network - (RD-A-1 /1)-Z8-A011-LV | 2027-08-10 → 2027-07-31 (-10d) | 2027-08-16 → 2027-08-04 (-12d) | -139.02d → -130d |
| RHD4CZ8A011LV2400 | Backfilling of Duct Banks for Low Voltage Network - (RD-A-1 /1)-Z8-A011-LV | 2027-08-16 → 2027-08-05 (-11d) | 2027-08-22 → 2027-08-10 (-12d) | -139.02d → -130d |
| 7851 | **RHD4-02-002-A011-(LV)-Low Voltage Drawpit** | 2027-08-15 → 2027-08-12 (-3d) | 2027-08-19 → 2027-08-16 (-3d) |  |
| RHD4CZ8A011LV5100 | Excavation of Drawpit size 900x900x1000mm for Low Voltage Network - (RD-A-1 /1)-Z8-A011-LV | 2027-08-15 → 2027-08-12 (-3d) | 2027-08-17 → 2027-08-14 (-3d) | -150.02d → -148d |
| RHD4CZ8A011LV5200 | Installation of Drawpit size 900x900x1000mm for Low Voltage Network - (RD-A-1 /1)-Z8-A011-LV | 2027-08-17 → 2027-08-15 (-2d) | 2027-08-19 → 2027-08-16 (-3d) | -150.02d → -148d |
| 7852 | **RHD4-02-002-A011-(LV)-Low Voltage cables** | 2027-08-22 → 2027-08-17 (-5d) | 2027-09-01 → 2027-08-26 (-6d) |  |
| RHD4CZ8A011LV3100 | Excavation for Low Voltage Cables for Low Voltage Network - (RD-A-1 /1)-Z8-A011-LV | 2027-08-22 → 2027-08-17 (-5d) | 2027-08-25 → 2027-08-19 (-6d) | -139.02d → -135d |
| RHD4CZ8A011LV3200 | Cable Laying of Low Voltage Cables for Low Voltage Network - (RD-A-1 /1)-Z8-A011-LV | 2027-08-25 → 2027-08-21 (-4d) | 2027-08-28 → 2027-08-22 (-6d) | -139.02d → -135d |
| RHD4CZ8A011LV3300 | Warning tape and Backfill for Low Voltage Cables for Low Voltage Network - (RD-A-1 /1)-Z8-A011-LV | 2027-08-28 → 2027-08-23 (-5d) | 2027-08-30 → 2027-08-24 (-6d) | -139.02d → -135d |
| RHD4CZ8A011LV3400 | Testing of Low Voltage Cables for Low Voltage Network - (RD-A-1 /1)-Z8-A011-LV | 2027-08-30 → 2027-08-25 (-5d) | 2027-09-01 → 2027-08-26 (-6d) | -139.02d → -135d |
| 7853 | **RHD4-02-002-A011-(LV)-Low Voltage Distribution Pillars** | 2027-09-01 → 2027-08-28 (-4d) | 2027-09-08 → 2027-09-02 (-6d) |  |
| RHD4CZ8A011LV4100 | Leveling for Distribution Pillars for Low Voltage Network - (RD-A-1 /1)-Z8-A011-LV | 2027-09-01 → 2027-08-28 (-4d) | 2027-09-04 → 2027-08-29 (-6d) | -139.02d → -135d |
| RHD4CZ8A011LV4200 | Lean Concrete for Distribution Pillars for Low Voltage Network - (RD-A-1 /1)-Z8-A011-LV | 2027-09-04 → 2027-08-30 (-5d) | 2027-09-06 → 2027-08-31 (-6d) | -139.02d → -135d |
| RHD4CZ8A011LV4300 | Installation of Distribution Pillars for Low Voltage Network - (RD-A-1 /1)-Z8-A011-LV | 2027-09-06 → 2027-09-01 (-5d) | 2027-09-08 → 2027-09-02 (-6d) | -139.02d → -135d |
| 7855 | **RHD4-02-002-Z8-A011-Street Lighting Network - SL** | 2027-09-08 → 2027-09-04 (-4d) | 2027-11-02 → 2027-10-27 (-6d) |  |
| 7857 | **RHD4-02-002-A011-(SL)-Street Lighting Drawpit** | 2027-09-08 → 2027-09-04 (-4d) | 2027-09-13 → 2027-09-07 (-6d) |  |
| RHD4CZ8A011SL5100 | Excavation of Drawpit size 600x600x900mm for Street Lighting Network - (RD-A-1 /1)-Z8-A011-SL | 2027-09-08 → 2027-09-04 (-4d) | 2027-09-11 → 2027-09-05 (-6d) | -139.02d → -135d |
| RHD4CZ8A011SL5200 | Installation of Drawpit size 600x600x900mm for Street Lighting Network - (RD-A-1 /1)-Z8-A011-SL | 2027-09-11 → 2027-09-06 (-5d) | 2027-09-13 → 2027-09-07 (-6d) | -139.02d → -135d |
| 7858 | **RHD4-02-002-A011-(SL)-Street Lighting cables** | 2027-09-13 → 2027-09-08 (-5d) | 2027-10-03 → 2027-09-27 (-6d) |  |
| RHD4CZ8A011SL3100 | Excavation for Street Lighting Cables for Street Lighting Network - (RD-A-1 /1)-Z8-A011-SL | 2027-09-13 → 2027-09-08 (-5d) | 2027-09-19 → 2027-09-13 (-6d) | -139.02d → -135d |
| RHD4CZ8A011SL3200 | Cable Laying of Street Lighting Cables for Street Lighting Network - (RD-A-1 /1)-Z8-A011-SL | 2027-09-19 → 2027-09-14 (-5d) | 2027-09-25 → 2027-09-18 (-7d) | -139.02d → -135d |
| RHD4CZ8A011SL3300 | Warning tape and Backfill for Street Lighting Cables for Street Lighting Network - (RD-A-1 /1)-Z8-A011-SL | 2027-09-25 → 2027-09-19 (-6d) | 2027-09-29 → 2027-09-22 (-7d) | -139.02d → -135d |
| RHD4CZ8A011SL3400 | Testing of Street Lighting Cables for Street Lighting Network - (RD-A-1 /1)-Z8-A011-SL | 2027-09-29 → 2027-09-25 (-4d) | 2027-10-03 → 2027-09-27 (-6d) | -139.02d → -135d |
| 7859 | **RHD4-02-002-A011-(SL)-Street Lighting Poles** | 2027-10-03 → 2027-09-28 (-5d) | 2027-10-24 → 2027-10-18 (-6d) |  |
| RHD4CZ8A011SL1100 | Excavation for RC Base for Lighting Poles for Street Lighting Network - (RD-A-1 /1)-Z8-A011-SL | 2027-10-03 → 2027-09-28 (-5d) | 2027-10-06 → 2027-09-30 (-6d) | -139.02d → -135d |
| RHD4CZ8A011SL1200 | Installation for RC Base for Lighting Poles for Street Lighting Network - (RD-A-1 /1)-Z8-A011-SL | 2027-10-06 → 2027-10-02 (-4d) | 2027-10-10 → 2027-10-04 (-6d) | -139.02d → -135d |
| RHD4CZ8A011SL1300 | Backfill for RC Base for Lighting Poles for Street Lighting Network - (RD-A-1 /1)-Z8-A011-SL | 2027-10-10 → 2027-10-05 (-5d) | 2027-10-13 → 2027-10-07 (-6d) | -139.02d → -135d |
| RHD4CZ8A011SL1400 | Installation for Lighting Poles for Street Lighting Network - (RD-A-1 /1)-Z8-A011-SL | 2027-10-13 → 2027-10-09 (-4d) | 2027-10-18 → 2027-10-12 (-6d) | -139.02d → -135d |
| RHD4CZ8A011SL1500 | Luminaire Installation for Lighting Poles for Street Lighting Network - (RD-A-1 /1)-Z8-A011-SL | 2027-10-18 → 2027-10-13 (-5d) | 2027-10-24 → 2027-10-18 (-6d) | -139.02d → -135d |
| 7860 | **RHD4-02-002-A011-(SL)-Street Lighting Feeder Pillars** | 2027-10-24 → 2027-10-19 (-5d) | 2027-10-31 → 2027-10-25 (-6d) |  |
| RHD4CZ8A011SL4100 | Leveling for Distribution Pillars for Street Lighting Network - (RD-A-1 /1)-Z8-A011-SL | 2027-10-24 → 2027-10-19 (-5d) | 2027-10-26 → 2027-10-20 (-6d) | -114.02d → -110d |
| RHD4CZ8A011SL4200 | Lean Concrete for Distribution Pillars for Street Lighting Network - (RD-A-1 /1)-Z8-A011-SL | 2027-10-26 → 2027-10-21 (-5d) | 2027-10-28 → 2027-10-23 (-5d) | -114.02d → -110d |
| RHD4CZ8A011SL4300 | Installation of Distribution Pillars for Street Lighting Network - (RD-A-1 /1)-Z8-A011-SL | 2027-10-28 → 2027-10-24 (-4d) | 2027-10-31 → 2027-10-25 (-6d) | -114.02d → -110d |

| ID | Task | Start | Finish | Total float |
| --- | --- | --- | --- | --- |
| 7861 | **RHD4-02-002-A011-(SL)-Street Lighting Earthing System** | 2027-10-31 → 2027-10-26 (-5d) | 2027-11-02 → 2027-10-27 (-6d) |  |
| RHD4CZ8A011SL6100 | Installation of Earthing for Lighting Poles and Fedder Pillers for Street Lighting Network - (RD-A-1 /1)-Z8-A011-SL | 2027-10-31 → 2027-10-26 (-5d) | 2027-11-02 → 2027-10-27 (-6d) | -114.02d → -110d |
| 7867 | **RHD4-02-002-Z8-A011-Telecommunications Network - TC** | 2027-02-09 → 2027-02-06 (-3d) | 2027-12-11 → 2027-12-05 (-6d) |  |
| 7868 | **RHD4-02-002-A011-(TC)-Telecommunications Ducts** | 2027-11-02 → 2027-10-28 (-5d) | 2027-12-04 → 2027-11-28 (-6d) |  |
| RHD4CZ8A011TC2100 | Excavation of HDPE Ducts for Telecom Network - (RD-A-1 /1)-Z8-A011-TC | 2027-11-02 → 2027-10-28 (-5d) | 2027-11-11 → 2027-11-06 (-5d) | -114.02d → -110d |
| RHD4CZ8A011TC2200 | Installation of HDPE Ducts for Telecom Network - (RD-A-1 /1)-Z8-A011-TC | 2027-11-11 → 2027-11-07 (-4d) | 2027-11-24 → 2027-11-18 (-6d) | -114.02d → -110d |
| RHD4CZ8A011TC2400 | Backfilling of HDPE Ducts for Telecom Network - (RD-A-1 /1)-Z8-A011-TC | 2027-11-24 → 2027-11-20 (-4d) | 2027-12-04 → 2027-11-28 (-6d) | -114.02d → -110d |
| 7869 | **RHD4-02-002-A011-(TC)-Telecommunications Manholes** | 2027-12-04 → 2027-11-29 (-5d) | 2027-12-11 → 2027-12-05 (-6d) |  |
| RHD4CZ8A011TC5100 | Excavation for Manholes for Telecom Network - (RD-A-1 /1)-Z8-A011-TC | 2027-12-04 → 2027-11-29 (-5d) | 2027-12-07 → 2027-12-01 (-6d) | -114.02d → -110d |
| RHD4CZ8A011TC5200 | Installation of Manholes for Telecom Network - (RD-A-1 /1)-Z8-A011-TC | 2027-12-07 → 2027-12-02 (-5d) | 2027-12-11 → 2027-12-05 (-6d) | -114.02d → -110d |
| 7870 | **RHD4-02-002-A011-(TC)-Telecomminications Road Crossings** | 2027-02-09 → 2027-02-06 (-3d) | 2027-02-27 → 2027-02-21 (-6d) |  |
| RHD4CZ8A011TC3100 | Excavation for Road Crossings for Telecom Network - (RD-A-1 /1)-Z8-A011-TC | 2027-02-09 → 2027-02-06 (-3d) | 2027-02-13 → 2027-02-08 (-5d) | -183.02d → -180d |
| RHD4CZ8A011TC3200 | Installation of Road Crossings for Telecom Network - (RD-A-1 /1)-Z8-A011-TC | 2027-02-13 → 2027-02-09 (-4d) | 2027-02-17 → 2027-02-13 (-4d) | -172.02d → -163d |
| RHD4CZ8A011TC3300 | Pouring of Road Crossings for Telecom Network - (RD-A-1 /1)-Z8-A011-TC | 2027-02-17 → 2027-02-14 (-3d) | 2027-02-23 → 2027-02-17 (-6d) | -172.02d → -163d |
| RHD4CZ8A011TC3400 | Backfilling of Road Crossings for Telecom Network - (RD-A-1 /1)-Z8-A011-TC | 2027-02-23 → 2027-02-18 (-5d) | 2027-02-27 → 2027-02-21 (-6d) | -172.02d → -163d |
| 7871 | **RHD4-02-002-Z8-A011-Information and Communication Technologies - ICT** | 2027-12-11 → 2027-12-06 (-5d) | 2028-02-03 → 2028-01-29 (-5d) |  |
| 7872 | **RHD4-02-002-A011-(ICT)-Information and Communication Technologies Ducts** | 2027-12-11 → 2027-12-06 (-5d) | 2028-01-27 → 2028-01-22 (-5d) |  |
| RHD4CZ8A011ICT2100 | Excavation of HDPE Ducts for ICT Network - (RD-A-1 /1)-Z8-A011-ICT | 2027-12-11 → 2027-12-06 (-5d) | 2027-12-25 → 2027-12-19 (-6d) | -114.02d → -110d |
| RHD4CZ8A011ICT2200 | Installation of HDPE Ducts for ICT Network - (RD-A-1 /1)-Z8-A011-ICT | 2027-12-25 → 2027-12-20 (-5d) | 2028-01-13 → 2028-01-08 (-5d) | -114.02d → -110d |
| RHD4CZ8A011ICT2400 | Backfilling of HDPE Ducts for ICT Network - (RD-A-1 /1)-Z8-A011-ICT | 2028-01-13 → 2028-01-09 (-4d) | 2028-01-27 → 2028-01-22 (-5d) | -114.02d → -110d |
| 7873 | **RHD4-02-002-A011-(ICT)-Information and Communication Technologies Manholes** | 2028-01-27 → 2028-01-23 (-4d) | 2028-02-03 → 2028-01-29 (-5d) |  |
| RHD4CZ8A011ICT5100 | Excavation for Manholes for ICT Network - (RD-A-1 /1)-Z8-A011-ICT | 2028-01-27 → 2028-01-23 (-4d) | 2028-01-31 → 2028-01-25 (-6d) | -114.02d → -110d |
| RHD4CZ8A011ICT5200 | Installation of Manholes for ICT Network - (RD-A-1 /1)-Z8-A011-ICT | 2028-01-31 → 2028-01-26 (-5d) | 2028-02-03 → 2028-01-29 (-5d) | -114.02d → -110d |
| 7875 | **RHD4-02-002-Z8-A011-Security Network - CCTV** | 2028-02-03 → 2028-01-30 (-4d) | 2028-03-08 → 2028-03-02 (-6d) |  |
| 7876 | **RHD4-02-002-A011-(CCTV)-Civil Works** | 2028-02-03 → 2028-01-30 (-4d) | 2028-02-09 → 2028-02-03 (-6d) |  |
| RHD4CZ8A011CCTV2100 | Civil Works for Security Network - (RD-A-1 /1)-Z8-A011-CCTV | 2028-02-03 → 2028-01-30 (-4d) | 2028-02-09 → 2028-02-03 (-6d) | -114.02d → -110d |
| 7877 | **RHD4-02-002-A011-(CCTV)-CCTV Poles** | 2028-02-09 → 2028-02-05 (-4d) | 2028-02-21 → 2028-02-15 (-6d) |  |
| RHD4CZ8A011CCTV1100 | Excavation for RC Base for CCTV Poles for Security Network - (RD-A-1 /1)-Z8-A011-CCTV | 2028-02-09 → 2028-02-05 (-4d) | 2028-02-12 → 2028-02-06 (-6d) | -114.02d → -110d |
| RHD4CZ8A011CCTV1200 | Installation for RC Base for CCTV Poles for Security Network - (RD-A-1 /1)-Z8-A011-CCTV | 2028-02-12 → 2028-02-07 (-5d) | 2028-02-14 → 2028-02-08 (-6d) | -114.02d → -110d |
| RHD4CZ8A011CCTV1300 | Backfill for RC Base for CCTV Poles for Security Network - (RD-A-1 /1)-Z8-A011-CCTV | 2028-02-14 → 2028-02-09 (-5d) | 2028-02-16 → 2028-02-10 (-6d) | -114.02d → -110d |
| RHD4CZ8A011CCTV1400 | Installation for CCTV Poles for Security Network - (RD-A-1 /1)-Z8-A011-CCTV | 2028-02-16 → 2028-02-12 (-4d) | 2028-02-19 → 2028-02-13 (-6d) | -114.02d → -110d |
| RHD4CZ8A011CCTV1500 | Protection post Installation for CCTV Poles for Security Network - (RD-A-1 /1)-Z8-A011-CCTV | 2028-02-19 → 2028-02-14 (-5d) | 2028-02-21 → 2028-02-15 (-6d) | -114.02d → -110d |
| 7878 | **RHD4-02-002-A011-(CCTV)-Camera** | 2028-02-21 → 2028-02-16 (-5d) | 2028-02-24 → 2028-02-17 (-7d) |  |
| RHD4CZ8A011CCTV3100 | Installation for Cameras for Security Network - (RD-A-1 /1)-Z8-A011-CCTV | 2028-02-21 → 2028-02-16 (-5d) | 2028-02-24 → 2028-02-17 (-7d) | -111.02d → -107d |
| 7879 | **RHD4-02-002-A011-(CCTV)-Power and Infrastructure** | 2028-02-19 → 2028-02-14 (-5d) | 2028-02-21 → 2028-02-15 (-6d) |  |
| RHD4CZ8A011CCTV4100 | Installation of Power outlet, UPS and midspan for PTZ Camerafor Cameras for Security Network - (RD-A-1 /1)-Z8-A011-CCTV | 2028-02-19 → 2028-02-14 (-5d) | 2028-02-21 → 2028-02-15 (-6d) | -111.02d → -107d |
| 7881 | **RHD4-02-002-A011-(CCTV)-CCTV Panels and Components** | 2028-02-24 → 2028-02-19 (-5d) | 2028-03-08 → 2028-03-02 (-6d) |  |
| RHD4CZ8A011CCTV6100 | Installation for CCTV Panels for Security Network - (RD-A-1 /1)-Z8-A011-CCTV | 2028-02-24 → 2028-02-19 (-5d) | 2028-03-08 → 2028-03-02 (-6d) | -111.02d → -107d |
| 7892 | **RHD4-02-002-Z8-RA04** |  | 2028-11-02 → 2028-10-28 (-5d) |  |
| 8071 | **RHD4-02-002-Z8-RA04-Road Works - RD** |  | 2028-11-02 → 2028-10-28 (-5d) |  |
| 8073 | **RHD4-02-002-RA04-(RD)-Aggregate Base Course** | 2027-02-23 → 2027-02-18 (-5d) | 2027-03-01 → 2027-02-25 (-4d) |  |
| RHD4CZ8RA04RD2100 | Supply, lay and compaction Aggregate base course compacted thickness 300 mmfor Roads - (ROUND-04)-Z8-RA04-RD | 2027-02-23 → 2027-02-18 (-5d) | 2027-03-01 → 2027-02-25 (-4d) | -162.04d → -159.02d |
| 8074 | **RHD4-02-002-RA04-(RD)-Bituminous base course Two Layers, including (MC1)&(RC2)** | 2027-03-01 → 2027-02-25 (-4d) | 2027-10-28 → 2027-10-25 (-3d) |  |
| RHD4CZ8RA04RD3100 | Supply, lay and Asphaltic base course including Prime Coat (MC1) for 1st Layer - (ROUND-04)-Z8-RA04-RD | 2027-03-01 → 2027-02-25 (-4d) | 2027-03-04 → 2027-03-01 (-3d) | -162.04d → -159.02d |
| RHD4CZ8RA04RD3200 | Supply, lay and Asphaltic base course including Tack Coat (RC2) for 2nd Layer - (ROUND-04)-Z8-RA04-RD | 2027-10-25 → 2027-10-23 (-2d) | 2027-10-28 → 2027-10-25 (-3d) | -119.02d → -117d |
| 8076 | **RHD4-02-002-RA04-(RD)-Precast Concrete Curb** | 2028-03-20 → 2028-03-15 (-5d) | 2028-03-25 → 2028-03-19 (-6d) |  |
| RHD4CZ8RA04RD5100 | Supply and installation Precast Concrete Kerb for Roads - (ROUND-04)-Z8-RA04-RD | 2028-03-20 → 2028-03-15 (-5d) | 2028-03-25 → 2028-03-19 (-6d) | -109.02d → -105d |
| 8079 | **RHD4-02-002-RA04-(RD)-Traffic Signage** | 2028-03-25 → 2028-03-20 (-5d) | 2028-04-03 → 2028-03-28 (-6d) |  |
| RHD4CZ8RA04RD8100 | Installation of Traffic Signage for Road Network - (ROUND-04)-Z8-RA04-RD | 2028-03-25 → 2028-03-20 (-5d) | 2028-04-03 → 2028-03-28 (-6d) | -109.02d → -105d |
| 8075 | **RHD4-02-002-RA04-(RD)-Bituminous concrete wearing course including tack coat (RC2)** | 2028-03-25 → 2028-03-20 (-5d) | 2028-03-27 → 2028-03-21 (-6d) |  |
| RHD4CZ8RA04RD4100 | Supply, lay and compaction Asphaltic wearing course including tack Coat (RC2)for Road Network - (ROUND-04)-Z8-RA04-RD | 2028-03-25 → 2028-03-20 (-5d) | 2028-03-27 → 2028-03-21 (-6d) | -109.02d → -105d |
| 8080 | **RHD4-02-002-RA04-(RD)-Speed Table and Wheel Stopper** | 2028-03-27 → 2028-03-22 (-5d) | 2028-04-09 → 2028-04-03 (-6d) |  |
| RHD4CZ8RA04RD9100 | Installation for Speed Bump for Road Network - (ROUND-04)-Z8-RA04-RD | 2028-03-27 → 2028-03-22 (-5d) | 2028-04-09 → 2028-04-03 (-6d) | -109.02d → -105d |
| 8078 | **RHD4-02-002-RA04-(RD)-Pavement Marking** | 2028-10-30 → 2028-10-24 (-6d) | 2028-11-02 → 2028-10-28 (-5d) |  |
| RHD4CZ8RA04RD7100 | Pavement Markings for Road Network - (ROUND-04)-Z8-RA04-RD | 2028-10-30 → 2028-10-24 (-6d) | 2028-11-02 → 2028-10-28 (-5d) | -180d → -175d |
| 8031 | **RHD4-02-002-Z8-RA04-Medium Voltage Network - MV** | 2027-06-28 → 2027-06-26 (-2d) | 2027-07-22 → 2027-07-19 (-3d) |  |
| 8034 | **RHD4-02-002-RA04-(MV)-Medium Voltage cables 3Cx 500 mm²** | 2027-06-28 → 2027-06-26 (-2d) | 2027-06-30 → 2027-06-27 (-3d) |  |
| RHD4CZ8RA04MV3400 | Termination of Medium Voltage Cables 3Cx 500 mm² - (ROUND-04)-Z8-RA04-MV | 2027-06-28 → 2027-06-26 (-2d) | 2027-06-30 → 2027-06-27 (-3d) | -146.02d → -144d |
| 8035 | **RHD4-02-002-RA04-(MV)-Medium Voltage cables 3Cx 50 mm²** | 2027-06-30 → 2027-06-28 (-2d) | 2027-07-07 → 2027-07-04 (-3d) |  |
| RHD4CZ8RA04MV3101 | Installation of Medium Voltage Cables 3Cx 50 mm² - (ROUND-04)-Z8-RA04-MV | 2027-06-30 → 2027-06-28 (-2d) | 2027-07-03 → 2027-06-29 (-4d) | -146.02d → -144d |
| RHD4CZ8RA04MV3301 | Testing of Medium Voltage Cables 3Cx 50 mm² - (ROUND-04)-Z8-RA04-MV | 2027-07-03 → 2027-06-30 (-3d) | 2027-07-05 → 2027-07-01 (-4d) | -146.02d → -144d |
| RHD4CZ8RA04MV3401 | Termination of Medium Voltage Cables 3Cx 50 mm² - (ROUND-04)-Z8-RA04-MV | 2027-07-05 → 2027-07-03 (-2d) | 2027-07-07 → 2027-07-04 (-3d) | -146.02d → -144d |
| 8037 | **RHD4-02-002-RA04-(MV)-Unit Substations** | 2027-07-07 → 2027-07-05 (-2d) | 2027-07-22 → 2027-07-19 (-3d) |  |
| RHD4CZ8RA04MV5100 | Excavation for Unit Substations for Medium Voltage Network - (ROUND-04)-Z8-RA04-MV | 2027-07-07 → 2027-07-05 (-2d) | 2027-07-10 → 2027-07-06 (-4d) | -146.02d → -144d |
| RHD4CZ8RA04MV5200 | Concrete Base Placement for Unit Substations for Medium Voltage Network - (ROUND-04)-Z8-RA04-MV | 2027-07-10 → 2027-07-07 (-3d) | 2027-07-12 → 2027-07-08 (-4d) | -146.02d → -144d |
| RHD4CZ8RA04MV5300 | Installation for Fences and doors for Medium Voltage Network - (ROUND-04)-Z8-RA04-MV | 2027-07-12 → 2027-07-10 (-2d) | 2027-07-18 → 2027-07-14 (-4d) | -146.02d → -144d |
| RHD4CZ8RA04MV5400 | Installation for Unit Substations for Medium Voltage Network - (ROUND-04)-Z8-RA04-MV | 2027-07-18 → 2027-07-15 (-3d) | 2027-07-22 → 2027-07-19 (-3d) | -146.02d → -144d |
| 8038 | **RHD4-02-002-Z8-RA04-Low Voltage Network - LV** | 2027-07-22 → 2027-07-20 (-2d) | 2027-08-08 → 2027-08-04 (-4d) |  |
| 8041 | **RHD4-02-002-RA04-(LV)-Low Voltage cables** | 2027-07-22 → 2027-07-20 (-2d) | 2027-08-01 → 2027-07-28 (-4d) |  |
| RHD4CZ8RA04LV3100 | Excavation for Low Voltage Cables for Low Voltage Network - (ROUND-04)-Z8-RA04-LV | 2027-07-22 → 2027-07-20 (-2d) | 2027-07-25 → 2027-07-21 (-4d) | -146.02d → -144d |

| ID | Task | Start | Finish | Total float |
| --- | --- | --- | --- | --- |
| RHD4CZ8RA04LV3200 | Cable Laying of Low Voltage Cables for Low Voltage Network - (ROUND-04)-Z8-RA04-LV | 2027-07-25 → 2027-07-22 (-3d) | 2027-07-27 → 2027-07-24 (-3d) | -146.02d → -144d |
| RHD4CZ8RA04LV3300 | Warning tape and Backfill for Low Voltage Cables for Low Voltage Network - (ROUND-04)-Z8-RA04-LV | 2027-07-27 → 2027-07-25 (-2d) | 2027-07-29 → 2027-07-26 (-3d) | -146.02d → -144d |
| RHD4CZ8RA04LV3400 | Testing of Low Voltage Cables for Low Voltage Network - (ROUND-04)-Z8-RA04-LV | 2027-07-29 → 2027-07-27 (-2d) | 2027-08-01 → 2027-07-28 (-4d) | -146.02d → -144d |
| 8042 | **RHD4-02-002-RA04-(LV)-Low Voltage Distribution Pillars** | 2027-08-01 → 2027-07-29 (-3d) | 2027-08-08 → 2027-08-04 (-4d) |  |
| RHD4CZ8RA04LV4100 | Leveling for Distribution Pillars for Low Voltage Network - (ROUND-04)-Z8-RA04-LV | 2027-08-01 → 2027-07-29 (-3d) | 2027-08-03 → 2027-07-31 (-3d) | -146.02d → -144d |
| RHD4CZ8RA04LV4200 | Lean Concrete for Distribution Pillars for Low Voltage Network - (ROUND-04)-Z8-RA04-LV | 2027-08-03 → 2027-08-01 (-2d) | 2027-08-05 → 2027-08-02 (-3d) | -146.02d → -144d |
| RHD4CZ8RA04LV4300 | Installation of Distribution Pillars for Low Voltage Network - (ROUND-04)-Z8-RA04-LV | 2027-08-05 → 2027-08-03 (-2d) | 2027-08-08 → 2027-08-04 (-4d) | -146.02d → -144d |
| 8044 | **RHD4-02-002-Z8-RA04-Street Lighting Network - SL** | 2027-07-20 → 2027-07-19 (-1d) | 2027-09-06 → 2027-09-02 (-4d) |  |
| 8045 | **RHD4-02-002-RA04-(SL)-Street Lighting duct banks** | 2027-07-20 → 2027-07-19 (-1d) | 2027-08-08 → 2027-08-05 (-3d) |  |
| RHD4CZ8RA04SL2100 | Excavation of Duct Banks for Street Lighting Network - (ROUND-04)-Z8-RA04-SL | 2027-07-20 → 2027-07-19 (-1d) | 2027-07-25 → 2027-07-22 (-3d) | -140.02d → -139d |
| RHD4CZ8RA04SL2200 | Installation of Duct Banks for Street Lighting Network - (ROUND-04)-Z8-RA04-SL | 2027-07-25 → 2027-07-24 (-1d) | 2027-07-31 → 2027-07-28 (-3d) | -140.02d → -139d |
| RHD4CZ8RA04SL2300 | Pouring of Duct Banks for Street Lighting Network - (ROUND-04)-Z8-RA04-SL | 2027-07-31 → 2027-07-29 (-2d) | 2027-08-04 → 2027-08-02 (-2d) | -140.02d → -139d |
| RHD4CZ8RA04SL2400 | Backfilling of Duct Banks for Street Lighting Network - (ROUND-04)-Z8-RA04-SL | 2027-08-04 → 2027-08-03 (-1d) | 2027-08-08 → 2027-08-05 (-3d) | -140.02d → -139d |
| 8046 | **RHD4-02-002-RA04-(SL)-Street Lighting Drawpit** | 2027-08-08 → 2027-08-05 (-3d) | 2027-08-12 → 2027-08-09 (-3d) |  |
| RHD4CZ8RA04SL5100 | Excavation of Drawpit size 600x600x900mm for Street Lighting Network - (ROUND-04)-Z8-RA04-SL | 2027-08-08 → 2027-08-05 (-3d) | 2027-08-10 → 2027-08-07 (-3d) | -146.02d → -144d |
| RHD4CZ8RA04SL5200 | Installation of Drawpit size 600x600x900mm for Street Lighting Network - (ROUND-04)-Z8-RA04-SL | 2027-08-10 → 2027-08-08 (-2d) | 2027-08-12 → 2027-08-09 (-3d) | -146.02d → -144d |
| 8047 | **RHD4-02-002-RA04-(SL)-Street Lighting cables** | 2027-08-12 → 2027-08-10 (-2d) | 2027-08-25 → 2027-08-22 (-3d) |  |
| RHD4CZ8RA04SL3100 | Excavation for Street Lighting Cables for Street Lighting Network - (ROUND-04)-Z8-RA04-SL | 2027-08-12 → 2027-08-10 (-2d) | 2027-08-16 → 2027-08-12 (-4d) | -146.02d → -144d |
| RHD4CZ8RA04SL3200 | Cable Laying of Street Lighting Cables for Street Lighting Network - (ROUND-04)-Z8-RA04-SL | 2027-08-16 → 2027-08-14 (-2d) | 2027-08-19 → 2027-08-16 (-3d) | -146.02d → -144d |
| RHD4CZ8RA04SL3300 | Warning tape and Backfill for Street Lighting Cables for Street Lighting Network - (ROUND-04)-Z8-RA04-SL | 2027-08-19 → 2027-08-17 (-2d) | 2027-08-23 → 2027-08-19 (-4d) | -146.02d → -144d |
| RHD4CZ8RA04SL3400 | Testing of Street Lighting Cables for Street Lighting Network - (ROUND-04)-Z8-RA04-SL | 2027-08-23 → 2027-08-21 (-2d) | 2027-08-25 → 2027-08-22 (-3d) | -146.02d → -144d |
| 8048 | **RHD4-02-002-RA04-(SL)-Street Lighting Poles** | 2027-08-25 → 2027-08-23 (-2d) | 2027-09-06 → 2027-09-02 (-4d) |  |
| RHD4CZ8RA04SL1100 | Excavation for RC Base for Lighting Poles for Street Lighting Network - (ROUND-04)-Z8-RA04-SL | 2027-08-25 → 2027-08-23 (-2d) | 2027-08-28 → 2027-08-24 (-4d) | -146.02d → -144d |
| RHD4CZ8RA04SL1200 | Installation for RC Base for Lighting Poles for Street Lighting Network - (ROUND-04)-Z8-RA04-SL | 2027-08-28 → 2027-08-25 (-3d) | 2027-08-30 → 2027-08-26 (-4d) | -146.02d → -144d |
| RHD4CZ8RA04SL1300 | Backfill for RC Base for Lighting Poles for Street Lighting Network - (ROUND-04)-Z8-RA04-SL | 2027-08-30 → 2027-08-28 (-2d) | 2027-09-01 → 2027-08-29 (-3d) | -146.02d → -144d |
| RHD4CZ8RA04SL1400 | Installation for Lighting Poles for Street Lighting Network - (ROUND-04)-Z8-RA04-SL | 2027-09-01 → 2027-08-30 (-2d) | 2027-09-04 → 2027-08-31 (-4d) | -146.02d → -144d |
| RHD4CZ8RA04SL1500 | Luminaire Installation for Lighting Poles for Street Lighting Network - (ROUND-04)-Z8-RA04-SL | 2027-09-04 → 2027-09-01 (-3d) | 2027-09-06 → 2027-09-02 (-4d) | -146.02d → -144d |
| 489 | **RHD4-02-002-Z8-RA04-Telecommunications Network - TC** | 2027-02-13 → 2027-02-09 (-4d) | 2027-10-07 → 2027-10-05 (-2d) |  |
| 490 | **RHD4-02-002-C081-(TC)-Telecommunications Ducts** | 2027-09-06 → 2027-09-04 (-2d) | 2027-10-07 → 2027-10-05 (-2d) |  |
| RHD4CZ8RA04TC2100 | Excavation of HDPE Ducts for Telecom Network - (ROUND-04)-Z8-RA04-TC | 2027-09-06 → 2027-09-04 (-2d) | 2027-09-18 → 2027-09-15 (-3d) | -145.02d → -143d |
| RHD4CZ8RA04TC2200 | Installation of HDPE Ducts for Telecom Network - (ROUND-04)-Z8-RA04-TC | 2027-09-18 → 2027-09-15 (-3d) | 2027-09-28 → 2027-09-26 (-2d) | -141.02d → -139d |
| RHD4CZ8RA04TC2400 | Backfilling of HDPE Ducts for Telecom Network - (ROUND-04)-Z8-RA04-TC | 2027-09-28 → 2027-09-26 (-2d) | 2027-10-07 → 2027-10-05 (-2d) | -139.03d → -137.01d |
| 491 | **RHD4-02-002-C081-(TC)-Telecommunications Manholes** | 2027-09-18 → 2027-09-15 (-3d) | 2027-09-28 → 2027-09-26 (-2d) |  |
| RHD4CZ8RA04TC5100 | Excavation for Manholes for Telecom Network - (ROUND-04)-Z8-RA04-TC | 2027-09-18 → 2027-09-15 (-3d) | 2027-09-22 → 2027-09-20 (-2d) | -145.02d → -143d |
| RHD4CZ8RA04TC5200 | Installation of Manholes for Telecom Network - (ROUND-04)-Z8-RA04-TC | 2027-09-22 → 2027-09-20 (-2d) | 2027-09-28 → 2027-09-26 (-2d) | -145.02d → -143d |
| 5411 | **RHD4-02-002-C081-(TC)-Telecomminications Road Crossings** | 2027-02-13 → 2027-02-09 (-4d) | 2027-02-23 → 2027-02-18 (-5d) |  |
| RHD4CZ8RA04TC3100 | Excavation for Road Crossings for Telecom Network - (ROUND-04)-Z8-RA04-TC | 2027-02-13 → 2027-02-09 (-4d) | 2027-02-15 → 2027-02-10 (-5d) | -183.02d → -180d |
| RHD4CZ8RA04TC3200 | Installation of Road Crossings for Telecom Network - (ROUND-04)-Z8-RA04-TC | 2027-02-15 → 2027-02-11 (-4d) | 2027-02-17 → 2027-02-14 (-3d) | -162.04d → -159.02d |
| RHD4CZ8RA04TC3300 | Pouring of Road Crossings for Telecom Network - (ROUND-04)-Z8-RA04-TC | 2027-02-17 → 2027-02-14 (-3d) | 2027-02-20 → 2027-02-16 (-4d) | -162.04d → -159.02d |
| RHD4CZ8RA04TC3400 | Backfilling of Road Crossings for Telecom Network - (ROUND-04)-Z8-RA04-TC | 2027-02-20 → 2027-02-16 (-4d) | 2027-02-23 → 2027-02-18 (-5d) | -162.04d → -159.02d |
| 8060 | **RHD4-02-002-Z8-RA04-Information and Communication Technologies - ICT** | 2027-09-06 → 2027-09-04 (-2d) | 2027-09-22 → 2027-09-19 (-3d) |  |
| 8061 | **RHD4-02-002-RA04-(ICT)-Information and Communication Technologies Ducts** | 2027-09-06 → 2027-09-04 (-2d) | 2027-09-22 → 2027-09-19 (-3d) |  |
| RHD4CZ8RA04ICT2100 | Excavation of HDPE Ducts for ICT Network - (ROUND-04)-Z8-RA04-ICT | 2027-09-06 → 2027-09-04 (-2d) | 2027-09-11 → 2027-09-07 (-4d) | -146.02d → -144d |
| RHD4CZ8RA04ICT2200 | Installation of HDPE Ducts for ICT Network - (ROUND-04)-Z8-RA04-ICT | 2027-09-11 → 2027-09-08 (-3d) | 2027-09-18 → 2027-09-14 (-4d) | -146.02d → -144d |
| RHD4CZ8RA04ICT2400 | Backfilling of HDPE Ducts for ICT Network - (ROUND-04)-Z8-RA04-ICT | 2027-09-18 → 2027-09-15 (-3d) | 2027-09-22 → 2027-09-19 (-3d) | -146.02d → -144d |
| 8064 | **RHD4-02-002-Z8-RA04-Security Network - CCTV** | 2027-09-22 → 2027-09-20 (-2d) | 2027-10-25 → 2027-10-21 (-4d) |  |
| 8065 | **RHD4-02-002-RA04-(CCTV)-Civil Works** | 2027-09-22 → 2027-09-20 (-2d) | 2027-09-29 → 2027-09-26 (-3d) |  |
| RHD4CZ8RA04CCTV2100 | Civil Works for Security Network - (ROUND-04)-Z8-RA04-CCTV | 2027-09-22 → 2027-09-20 (-2d) | 2027-09-29 → 2027-09-26 (-3d) | -146.02d → -144d |
| 8066 | **RHD4-02-002-RA04-(CCTV)-CCTV Poles** | 2027-09-29 → 2027-09-27 (-2d) | 2027-10-11 → 2027-10-07 (-4d) |  |
| RHD4CZ8RA04CCTV1100 | Excavation for RC Base for CCTV Poles for Security Network - (ROUND-04)-Z8-RA04-CCTV | 2027-09-29 → 2027-09-27 (-2d) | 2027-10-02 → 2027-09-28 (-4d) | -146.02d → -144d |
| RHD4CZ8RA04CCTV1200 | Installation for RC Base for CCTV Poles for Security Network - (ROUND-04)-Z8-RA04-CCTV | 2027-10-02 → 2027-09-29 (-3d) | 2027-10-04 → 2027-09-30 (-4d) | -146.02d → -144d |
| RHD4CZ8RA04CCTV1300 | Backfill for RC Base for CCTV Poles for Security Network - (ROUND-04)-Z8-RA04-CCTV | 2027-10-04 → 2027-10-02 (-2d) | 2027-10-06 → 2027-10-03 (-3d) | -146.02d → -144d |
| RHD4CZ8RA04CCTV1400 | Installation for CCTV Poles for Security Network - (ROUND-04)-Z8-RA04-CCTV | 2027-10-06 → 2027-10-04 (-2d) | 2027-10-09 → 2027-10-05 (-4d) | -146.02d → -144d |
| RHD4CZ8RA04CCTV1500 | Protection post Installation for CCTV Poles for Security Network - (ROUND-04)-Z8-RA04-CCTV | 2027-10-09 → 2027-10-06 (-3d) | 2027-10-11 → 2027-10-07 (-4d) | -146.02d → -144d |
| 8067 | **RHD4-02-002-RA04-(CCTV)-Camera** | 2027-10-11 → 2027-10-09 (-2d) | 2027-10-13 → 2027-10-10 (-3d) |  |
| RHD4CZ8RA04CCTV3100 | Installation for Cameras for Security Network - (ROUND-04)-Z8-RA04-CCTV | 2027-10-11 → 2027-10-09 (-2d) | 2027-10-13 → 2027-10-10 (-3d) | -146.02d → -144d |
| 8068 | **RHD4-02-002-RA04-(CCTV)-Power and Infrastructure** | 2027-10-13 → 2027-10-11 (-2d) | 2027-10-16 → 2027-10-12 (-4d) |  |
| RHD4CZ8RA04CCTV4100 | Installation of Power outlet, UPS and midspan for PTZ Camerafor Cameras for Security Network - (ROUND-04)-Z8-RA04-CCTV | 2027-10-13 → 2027-10-11 (-2d) | 2027-10-16 → 2027-10-12 (-4d) | -146.02d → -144d |
| 8070 | **RHD4-02-002-RA04-(CCTV)-CCTV Panels and Components** | 2027-10-16 → 2027-10-13 (-3d) | 2027-10-25 → 2027-10-21 (-4d) |  |
| RHD4CZ8RA04CCTV6100 | Installation for CCTV Panels for Security Network - (ROUND-04)-Z8-RA04-CCTV | 2027-10-16 → 2027-10-13 (-3d) | 2027-10-25 → 2027-10-21 (-4d) | -146.02d → -144d |
| 7325 | **RHD4-02-002-Z8-L04** |  | 2028-01-18 → 2028-01-16 (-2d) |  |
| 7504 | **RHD4-02-002-Z8-L04-Road Works - RD** | 2027-02-23 → 2027-02-18 (-5d) | 2028-01-18 → 2028-01-16 (-2d) |  |
| 7505 | **RHD4-02-002-L04-(RD)-Subgrade** | 2027-02-23 → 2027-02-18 (-5d) | 2027-03-02 → 2027-02-25 (-5d) |  |
| RHD4CZ8L04RD1100 | Supply, lay and compaction subgrade compacted thickness 300 mm for Roads - (RD-L-04)-Z8-L04-RD | 2027-02-23 → 2027-02-18 (-5d) | 2027-03-02 → 2027-02-25 (-5d) | -183.02d → -180d |
| 7506 | **RHD4-02-002-L04-(RD)-Aggregate Base Course** | 2027-03-02 → 2027-02-27 (-3d) | 2027-03-08 → 2027-03-03 (-5d) |  |
| RHD4CZ8L04RD2100 | Supply, lay and compaction Aggregate base course compacted thickness 300 mmfor Roads - (RD-L-04)-Z8-L04-RD | 2027-03-02 → 2027-02-27 (-3d) | 2027-03-08 → 2027-03-03 (-5d) | -183.02d → -180d |
| 7507 | **RHD4-02-002-L04-(RD)-Bituminous base course Two Layers, including (MC1)&(RC2)** | 2027-03-08 → 2027-03-04 (-4d) | 2027-12-15 → 2027-12-13 (-2d) |  |
| RHD4CZ8L04RD3100 | Supply, lay and Asphaltic base course including Prime Coat (MC1) for 1st Layer - (RD-L-04)-Z8-L04-RD | 2027-03-08 → 2027-03-04 (-4d) | 2027-03-14 → 2027-03-06 (-8d) | -183.02d → -180d |
| RHD4CZ8L04RD3200 | Supply, lay and Asphaltic base course including Tack Coat (RC2) for 2nd Layer - (RD-L-04)-Z8-L04-RD | 2027-12-13 → 2027-12-12 (-1d) | 2027-12-15 → 2027-12-13 (-2d) | -158.02d → -157d |
| 7509 | **RHD4-02-002-L04-(RD)-Precast Concrete Curb** | 2027-12-15 → 2027-12-14 (-1d) | 2027-12-22 → 2027-12-20 (-2d) |  |

| ID | Task | Start | Finish | Complete | Total float |
| --- | --- | --- | --- | --- | --- |
| RHD4CZ8L04RD5100 | Supply and installation Precast Concrete Kerb for Roads - (RD-L-04)-Z8-L04-RD | 2027-12-15 → 2027-12-14 (-1d) | 2027-12-22 → 2027-12-20 (-2d) |  | -158.02d → -157d |
| 7512 | **RHD4-02-002-L04-(RD)-Traffic Signage** | 2027-12-22 → 2027-12-21 (-1d) | 2027-12-29 → 2027-12-27 (-2d) |  |  |
| RHD4CZ8L04RD8100 | Installation of Traffic Signage for Road Network - (RD-L-04)-Z8-L04-RD | 2027-12-22 → 2027-12-21 (-1d) | 2027-12-29 → 2027-12-27 (-2d) |  | -158.02d → -157d |
| 7510 | **RHD4-02-002-L04-(RD)-Precast Interlocking Block Pavers** | 2027-12-29 → 2027-12-28 (-1d) | 2028-01-10 → 2028-01-08 (-2d) |  |  |
| RHD4CZ8L04RD6100 | Interlocking block pavers for sidewalk-footpath for Side walks and Parking areas - (RD-L-04)-Z8-L04-RD | 2027-12-29 → 2027-12-28 (-1d) | 2028-01-10 → 2028-01-08 (-2d) |  | -158.02d → -157d |
| 7508 | **RHD4-02-002-L04-(RD)-Bituminous concrete wearing course including tack coat (RC2)** | 2028-01-10 → 2028-01-09 (-1d) | 2028-01-12 → 2028-01-10 (-2d) |  |  |
| RHD4CZ8L04RD4100 | Supply, lay and compaction Asphaltic wearing course including tack Coat (RC2)for Road Network - (RD-L-04)-Z8-L04-RD | 2028-01-10 → 2028-01-09 (-1d) | 2028-01-12 → 2028-01-10 (-2d) |  | -158.02d → -157d |
| 7511 | **RHD4-02-002-L04-(RD)-Pavement Marking** | 2028-01-12 → 2028-01-11 (-1d) | 2028-01-18 → 2028-01-16 (-2d) |  |  |
| RHD4CZ8L04RD7100 | Pavement Markings for Road Network - (RD-L-04)-Z8-L04-RD | 2028-01-12 → 2028-01-11 (-1d) | 2028-01-18 → 2028-01-16 (-2d) |  | -158.02d → -157d |
| 7329 | **RHD4-02-002-Z8-L04-Storm Network - ST** |  | 2027-06-23 → 2027-06-21 (-2d) |  |  |
| 7348 | **RHD4-02-002-L04-(ST)-MH Works - 2000 mm diameter** |  | 2027-04-28 → 2027-04-26 (-2d) |  |  |
| RHD4CZ8L04ST3202 | Installation of Base for MH 2000 mm - (RD-L-04)-Z8-L04-ST | 2027-04-19 → 2026-11-07 A (-163d) | 2027-04-21 → 2027-04-19 (-2d) | 0% → 33% | -110.02d → -109d |
| RHD4CZ8L04ST3302 | MH Ring and C.Slab works and Backfilling works for MH 2000 mm - (RD-L-04)-Z8-L04-ST | 2027-04-21 → 2027-04-20 (-1d) | 2027-04-24 → 2027-04-21 (-3d) |  | -110.02d → -109d |
| RHD4CZ8L04ST3402 | Steel Cover for MH 2000 mm - (RD-L-04)-Z8-L04-ST | 2027-04-24 → 2027-04-22 (-2d) | 2027-04-26 → 2027-04-24 (-2d) |  | -110.02d → -109d |
| RHD4CZ8L04ST3502 | Finishing, Benching, Testing works for MH 2000 mm - (RD-L-04)-Z8-L04-ST | 2027-04-26 → 2027-04-25 (-1d) | 2027-04-28 → 2027-04-26 (-2d) |  | -110.02d → -109d |
| 1844 | **RHD4-02-002-L04-(ST)-GRP Pipes - 400 mm diameter** |  | 2027-03-25 → 2027-03-21 (-4d) |  |  |
| RHD4CZ8L04ST1400 | Primary Test for GRP Pipe Line 400 mm - (RD-L-04)-Z8-L04-ST | 2027-03-23 → 2027-03-20 (-3d) | 2027-03-25 → 2027-03-21 (-4d) |  | -119.02d → -116d |
| 1852 | **RHD4-02-002-L04-(ST)-GRP Pipes - 1200 mm diameter** |  | 2027-03-23 → 2027-03-18 (-5d) |  |  |
| RHD4CZ8L04ST1108 | Excavation works for GRP Pipe Line 1200 mm - (RD-L-04)-Z8-L04-ST |  | 2027-03-14 → 2027-03-06 (-8d) |  | -125.02d → -122d |
| RHD4CZ8L04ST1208 | Bedding works for GRP Pipe Line 1200 mm - (RD-L-04)-Z8-L04-ST |  | 2027-03-16 → 2027-03-08 (-8d) |  | -119.02d → -116d |
| RHD4CZ8L04ST1308 | Installing for GRP Pipe Line 1200 mm - (RD-L-04)-Z8-L04-ST |  | 2027-03-18 → 2027-03-14 (-4d) |  | -119.02d → -116d |
| RHD4CZ8L04ST1508 | Backfilling and warning tape works for GRP Pipe Line 1200 mm - (RD-L-04)-Z8-L04-ST | 2027-03-21 → 2026-11-12 A (-129d) | 2027-03-23 → 2027-03-18 (-5d) | 0% → 40% | -119.02d → -116d |
| RHD4CZ8L04ST1408 | Primary Test for GRP Pipe Line 1200 mm - (RD-L-04)-Z8-L04-ST | 2027-03-18 → 2027-03-15 (-3d) | 2027-03-21 → 2027-03-16 (-5d) |  | -119.02d → -116d |
| 2414 | **RHD4-02-002-L04-(ST)-GRP Pipes - 600 mm diameter** |  | 2027-04-01 → 2027-03-28 (-4d) |  |  |
| RHD4CZ8L04ST1102 | Excavation works for GRP Pipe Line 600 mm - (RD-L-04)-Z8-L04-ST |  | 2027-03-23 → 2027-03-18 (-5d) |  | -125.02d → -122d |
| RHD4CZ8L04ST1202 | Bedding works for GRP Pipe Line 600 mm - (RD-L-04)-Z8-L04-ST |  | 2027-03-25 → 2027-03-21 (-4d) |  | -110.02d → -107d |
| RHD4CZ8L04ST1302 | Installing for GRP Pipe Line 600 mm - (RD-L-04)-Z8-L04-ST |  | 2027-03-28 → 2027-03-23 (-5d) |  | -110.02d → -107d |
| RHD4CZ8L04ST1402 | Primary Test for GRP Pipe Line 600 mm - (RD-L-04)-Z8-L04-ST | 2027-03-28 → 2027-03-24 (-4d) | 2027-03-30 → 2027-03-25 (-5d) |  | -110.02d → -107d |
| RHD4CZ8L04ST1502 | Backfilling and warning tape works for GRP Pipe Line 600 mm - (RD-L-04)-Z8-L04-ST | 2027-03-30 → 2027-03-27 (-3d) | 2027-04-01 → 2027-03-28 (-4d) |  | -110.02d → -107d |
| 3752 | **RHD4-02-002-L04-(ST)-MH Works - 1200 mm diameter** |  | 2027-06-12 → 2027-06-09 (-3d) |  |  |
| RHD4CZ8L04ST3200 | Installation of Base for MH 1200 mm - (RD-L-04)-Z8-L04-ST | 2027-05-24 → 2026-11-12 A (-193d) | 2027-05-29 → 2027-05-25 (-4d) | 0% → 83% | -166.02d → -164d |
| RHD4CZ8L04ST3300 | MH Ring and C.Slab works and Backfilling works for MH 1200 mm - (RD-L-04)-Z8-L04-ST | 2027-05-29 → 2027-05-27 (-2d) | 2027-06-02 → 2027-05-31 (-2d) |  | -166.02d → -165d |
| RHD4CZ8L04ST3400 | Steel Cover for MH 1200 mm - (RD-L-04)-Z8-L04-ST | 2027-06-02 → 2027-06-01 (-1d) | 2027-06-07 → 2027-06-05 (-2d) |  | -134.02d → -133d |
| RHD4CZ8L04ST3500 | Finishing, Benching, Testing works for MH 1200 mm - (RD-L-04)-Z8-L04-ST | 2027-06-07 → 2027-06-06 (-1d) | 2027-06-12 → 2027-06-09 (-3d) |  | -134.02d → -133d |
| 3739 | **RHD4-02-002-L04-(ST)-GRP Pipes - 700 mm diameter** |  | 2027-03-30 → 2027-03-25 (-5d) |  |  |
| RHD4CZ8L04ST1103 | Excavation works for GRP Pipe Line 700 mm - (RD-L-04)-Z8-L04-ST |  | 2027-03-21 → 2027-03-16 (-5d) | 100% → 32% | -125.02d → -122d |
| RHD4CZ8L04ST1203 | Bedding works for GRP Pipe Line 700 mm - (RD-L-04)-Z8-L04-ST |  | 2027-03-23 → 2027-03-18 (-5d) |  | -125.02d → -122d |
| RHD4CZ8L04ST1303 | Installing for GRP Pipe Line 700 mm - (RD-L-04)-Z8-L04-ST |  | 2027-03-25 → 2027-03-21 (-4d) |  | -125.02d → -122d |
| RHD4CZ8L04ST1403 | Primary Test for GRP Pipe Line 700 mm - (RD-L-04)-Z8-L04-ST | 2027-03-25 → 2027-03-22 (-3d) | 2027-03-28 → 2027-03-23 (-5d) |  | -125.02d → -122d |
| RHD4CZ8L04ST1503 | Backfilling and warning tape works for GRP Pipe Line 700 mm - (RD-L-04)-Z8-L04-ST | 2027-03-28 → 2027-03-24 (-4d) | 2027-03-30 → 2027-03-25 (-5d) |  | -125.02d → -122d |
| 3737 | **RHD4-02-002-L04-(ST)-GRP Pipes - 500 mm diameter** |  | 2027-04-01 → 2027-03-28 (-4d) |  |  |
| RHD4CZ8L04ST1201 | Bedding works for GRP Pipe Line 500 mm - (RD-L-04)-Z8-L04-ST | 2027-03-23 → 2027-03-20 (-3d) | 2027-03-25 → 2027-03-21 (-4d) |  | -125.02d → -122d |
| RHD4CZ8L04ST1301 | Installing for GRP Pipe Line 500 mm - (RD-L-04)-Z8-L04-ST | 2027-03-25 → 2027-03-22 (-3d) | 2027-03-28 → 2027-03-23 (-5d) |  | -125.02d → -122d |
| RHD4CZ8L04ST1401 | Primary Test for GRP Pipe Line 500 mm - (RD-L-04)-Z8-L04-ST | 2027-03-28 → 2027-03-24 (-4d) | 2027-03-30 → 2027-03-25 (-5d) |  | -125.02d → -122d |
| RHD4CZ8L04ST1501 | Backfilling and warning tape works for GRP Pipe Line 500 mm - (RD-L-04)-Z8-L04-ST | 2027-03-30 → 2027-03-27 (-3d) | 2027-04-01 → 2027-03-28 (-4d) |  | -125.02d → -122d |
| 7347 | **RHD4-02-002-L04-(ST)-MH Works - 1500 mm diameter** |  | 2027-06-23 → 2027-06-21 (-2d) |  |  |
| RHD4CZ8L04ST3201 | Installation of Base for MH 1500 mm - (RD-L-04)-Z8-L04-ST |  | 2027-04-21 → 2026-11-08 A (-164d) | 50% → 100% | -104.02d → none |
| RHD4CZ8L04ST3301 | MH Ring and C.Slab works and Backfilling works for MH 1500 mm - (RD-L-04)-Z8-L04-ST | 2027-04-21 → 2027-04-18 (-3d) | 2027-04-28 → 2027-04-24 (-4d) |  | -104.02d → -101d |
| RHD4CZ8L04ST3401 | Steel Cover for MH 1500 mm - (RD-L-04)-Z8-L04-ST | 2027-04-28 → 2027-04-25 (-3d) | 2027-05-03 → 2027-04-28 (-5d) |  | -104.02d → -101d |
| RHD4CZ8L04ST3501 | Finishing, Benching, Testing works for MH 1500 mm - (RD-L-04)-Z8-L04-ST | 2027-06-16 → 2027-06-15 (-1d) | 2027-06-23 → 2027-06-21 (-2d) |  | -138.02d → -137d |
| 7335 | **RHD4-02-002-L04-(ST)-GRP Pipes - 900 mm diameter** |  | 2027-03-28 → 2027-03-23 (-5d) |  |  |
| RHD4CZ8L04ST1105 | Excavation works for GRP Pipe Line 900 mm - (RD-L-04)-Z8-L04-ST |  | 2027-03-16 → 2027-03-08 (-8d) | 56% → 38% | -125.02d → -122d |
| RHD4CZ8L04ST1205 | Bedding works for GRP Pipe Line 900 mm - (RD-L-04)-Z8-L04-ST |  | 2027-03-20 → 2027-03-15 (-5d) | 56% → 38% | -108.02d → -105d |
| RHD4CZ8L04ST1305 | Installing for GRP Pipe Line 900 mm - (RD-L-04)-Z8-L04-ST |  | 2027-03-22 → 2027-03-17 (-5d) | 56% → 41% | -108.02d → -105d |
| RHD4CZ8L04ST1505 | Backfilling and warning tape works for GRP Pipe Line 900 mm - (RD-L-04)-Z8-L04-ST |  | 2027-03-28 → 2027-03-23 (-5d) | 0% → 38% | -108.02d → -105d |
| RHD4CZ8L04ST1405 | Primary Test for GRP Pipe Line 900 mm - (RD-L-04)-Z8-L04-ST | 2027-03-22 → 2027-03-18 (-4d) | 2027-03-24 → 2027-03-20 (-4d) |  | -108.02d → -105d |
| 7334 | **RHD4-02-002-L04-(ST)-GRP Pipes - 800 mm diameter** |  | 2027-03-30 → 2027-03-25 (-5d) |  |  |
| RHD4CZ8L04ST1104 | Excavation works for GRP Pipe Line 800 mm - (RD-L-04)-Z8-L04-ST |  | 2027-03-18 → 2027-03-14 (-4d) |  | -125.02d → -122d |
| RHD4CZ8L04ST1204 | Bedding works for GRP Pipe Line 800 mm - (RD-L-04)-Z8-L04-ST |  | 2027-03-21 → 2027-03-16 (-5d) |  | -106.02d → -103d |
| RHD4CZ8L04ST1304 | Installing for GRP Pipe Line 800 mm - (RD-L-04)-Z8-L04-ST |  | 2027-03-24 → 2027-03-20 (-4d) |  | -107.02d → -104d |
| RHD4CZ8L04ST1504 | Backfilling and warning tape works for GRP Pipe Line 800 mm - (RD-L-04)-Z8-L04-ST | 2027-03-28 → 2026-11-12 A (-136d) | 2027-03-30 → 2027-03-25 (-5d) | 0% → 30% | -108.02d → -105d |
| RHD4CZ8L04ST1404 | Primary Test for GRP Pipe Line 800 mm - (RD-L-04)-Z8-L04-ST | 2027-03-24 → 2027-03-21 (-3d) | 2027-03-27 → 2027-03-22 (-5d) |  | -107.02d → -104d |
| 7344 | **RHD4-02-002-L04-(ST)-UPVC Pipes - 300 mm diameter** | 2027-03-23 → 2026-11-12 (-131d) | 2027-06-16 → 2027-06-14 (-2d) |  |  |
| RHD4CZ8L04ST2100 | Excavation works for UPVC Pipe Line 300 mm - (RD-L-04)-Z8-L04-ST | 2027-03-23 → 2026-11-12 A (-131d) | 2027-03-25 → 2027-03-21 (-4d) | 0% → 28% | -119.02d → -116d |
| RHD4CZ8L04ST2200 | Bedding works for UPVC Pipe Line 300 mm - (RD-L-04)-Z8-L04-ST | 2027-03-25 → 2027-03-22 (-3d) | 2027-03-28 → 2027-03-23 (-5d) |  | -107.02d → -104d |
| RHD4CZ8L04ST2300 | Installing for UPVC Pipe Line 300 mm - (RD-L-04)-Z8-L04-ST | 2027-06-09 → 2027-06-08 (-1d) | 2027-06-12 → 2027-06-09 (-3d) |  | -166.02d → -165d |
| RHD4CZ8L04ST2400 | Primary Test for UPVC Pipe Line 300 mm - (RD-L-04)-Z8-L04-ST | 2027-06-12 → 2027-06-10 (-2d) | 2027-06-14 → 2027-06-12 (-2d) |  | -138.02d → -137d |
| RHD4CZ8L04ST2500 | Backfilling and warning tape works for UPVC Pipe Line 300 mm - (RD-L-04)-Z8-L04-ST | 2027-06-14 → 2027-06-13 (-1d) | 2027-06-16 → 2027-06-14 (-2d) |  | -138.02d → -137d |
| 7352 | **RHD4-02-002-L04-(ST)-Concrete Encasement** | 2027-06-09 → 2027-06-08 (-1d) | 2027-06-12 → 2027-06-09 (-3d) |  |  |
| RHD4CZ8L04ST6100 | Pipe Encasement for Storm Pipelines - (RD-L-04)-Z8-L04-ST | 2027-06-09 → 2027-06-08 (-1d) | 2027-06-12 → 2027-06-09 (-3d) |  | -166.02d → -165d |

| ID | Task | Start | Finish | Total float |
| --- | --- | --- | --- | --- |
| 7353 | **RHD4-02-002-Z8-L04-Catch Basin - ST** | 2027-06-02 → 2027-06-01 (-1d) | 2027-07-25 → 2027-07-22 (-3d) |  |
| 7354 | **RHD4-02-002-L04-(ST)-Single Catch Basin Works** | 2027-06-02 → 2027-06-01 (-1d) | 2027-07-25 → 2027-07-22 (-3d) |  |
| RHD4CZ8L04ST7100 | Excavation works for Single Catch Basin - (RD-L-04)-Z8-L04-ST | 2027-06-02 → 2027-06-01 (-1d) | 2027-06-05 → 2027-06-02 (-3d) | -166.02d → -165d |
| RHD4CZ8L04ST7200 | PC Blinding, Installation and Pipe connection for Single Catch Basin - (RD-L-04)-Z8-L04-ST | 2027-06-05 → 2027-06-03 (-2d) | 2027-06-07 → 2027-06-05 (-2d) | -166.02d → -165d |
| RHD4CZ8L04ST7300 | Rings & C.Slab & Final Backfill for Single Catch Basin - (RD-L-04)-Z8-L04-ST | 2027-06-07 → 2027-06-06 (-1d) | 2027-06-09 → 2027-06-07 (-2d) | -166.02d → -165d |
| RHD4CZ8L04ST7400 | Steel Cover for Single Catch Basin - (RD-L-04)-Z8-L04-ST | 2027-07-19 → 2027-07-18 (-1d) | 2027-07-21 → 2027-07-19 (-2d) | -162.02d → -161d |
| RHD4CZ8L04ST7500 | Finishing and Insulation works for Single Catch Basin - (RD-L-04)-Z8-L04-ST | 2027-07-21 → 2027-07-20 (-1d) | 2027-07-25 → 2027-07-22 (-3d) | -162.02d → -161d |
| 6409 | **RHD4-02-002-L016-(ST)-Double Catch Basin Works** | 2027-06-05 → 2027-06-03 (-2d) | 2027-06-16 → 2027-06-14 (-2d) |  |
| RHD4CZ8L04ST8100 | Excavation works for Double Catch Basin - (RD-L-16)-Z5-L016-ST | 2027-06-05 → 2027-06-03 (-2d) | 2027-06-07 → 2027-06-05 (-2d) | -150.02d → -149d |
| RHD4CZ8L04ST8200 | PC Blinding, Installation and Pipe connection for Double Catch Basin - (RD-L-16)-Z5-L016-ST | 2027-06-07 → 2027-06-06 (-1d) | 2027-06-09 → 2027-06-07 (-2d) | -150.02d → -149d |
| RHD4CZ8L04ST8300 | Rings & C.Slab & Final Backfillfor Double Catch Basin - (RD-L-16)-Z5-L016-ST | 2027-06-09 → 2027-06-08 (-1d) | 2027-06-12 → 2027-06-09 (-3d) | -150.02d → -149d |
| RHD4CZ8L04ST8400 | Steel Cover for Double Catch Basin - (RD-L-16)-Z5-L016-ST | 2027-06-12 → 2027-06-10 (-2d) | 2027-06-14 → 2027-06-12 (-2d) | -150.02d → -149d |
| RHD4CZ8L04ST8500 | Finishing and Insulation works for Double Catch Basin - (RD-L-16)-Z5-L016-ST | 2027-06-14 → 2027-06-13 (-1d) | 2027-06-16 → 2027-06-14 (-2d) | -150.02d → -149d |
| 7378 | **RHD4-02-002-Z8-L04-Sewage Network - SW** |  | 2027-07-07 → 2027-07-05 (-2d) |  |
| 957 | **RHD4-02-002-L04-(SW)-MH Works - 1200 mm diameter with Back drop** |  | 2027-06-28 → 2027-06-26 (-2d) |  |
| RHD4CZ8L04SW3201 | Installation of Base for MH 1200 mm - (RD-L-04)-Z8-L04-SW | 2027-06-19 → 2027-06-17 (-2d) | 2027-06-21 → 2027-06-19 (-2d) | -152.02d → -151d |
| RHD4CZ8L04SW3301 | MH Ring and C.Slab works and Backfilling works for MH 1200 mm - (RD-L-04)-Z8-L04-SW | 2027-06-21 → 2027-06-20 (-1d) | 2027-06-23 → 2027-06-21 (-2d) | -152.02d → -151d |
| RHD4CZ8L04SW3401 | Steel Cover for MH 1200 mm - (RD-L-04)-Z8-L04-SW | 2027-06-23 → 2027-06-22 (-1d) | 2027-06-26 → 2027-06-23 (-3d) | -152.02d → -151d |
| RHD4CZ8L04SW3501 | Finishing, Benching, Testing works for MH 1200 mm - (RD-L-04)-Z8-L04-SW | 2027-06-26 → 2027-06-24 (-2d) | 2027-06-28 → 2027-06-26 (-2d) | -152.02d → -151d |
| 3794 | **RHD4-02-002-L04-(SW)-MH Works - 1200 mm diameter** |  | 2027-07-07 → 2027-07-05 (-2d) |  |
| RHD4CZ8L04SW3200 | Installation of Base for MH 1200 mm - (RD-L-04)-Z8-L04-SW | 2027-06-19 → 2027-06-17 (-2d) | 2027-06-23 → 2027-06-21 (-2d) | -151.02d → -150d |
| RHD4CZ8L04SW3300 | MH Ring and C.Slab works and Backfilling works for MH 1200 mm - (RD-L-04)-Z8-L04-SW | 2027-06-23 → 2027-06-22 (-1d) | 2027-06-28 → 2027-06-26 (-2d) | -151.02d → -150d |
| RHD4CZ8L04SW3400 | Steel Cover for MH 1200 mm - (RD-L-04)-Z8-L04-SW | 2027-06-28 → 2027-06-27 (-1d) | 2027-07-03 → 2027-06-30 (-3d) | -151.02d → -150d |
| RHD4CZ8L04SW3500 | Finishing, Benching, Testing works for MH 1200 mm - (RD-L-04)-Z8-L04-SW | 2027-07-03 → 2027-07-01 (-2d) | 2027-07-07 → 2027-07-05 (-2d) | -151.02d → -150d |
| 3785 | **RHD4-02-002-L04-(SW)-GRP Pipes - 300 mm diameter** |  | 2027-06-23 → 2027-06-21 (-2d) |  |
| RHD4CZ8L04SW1100 | Excavation works for GRP Pipe Line 300 mm - (RD-L-04)-Z8-L04-SW |  | 2027-06-14 → 2027-06-12 (-2d) | -166.02d → -165d |
| RHD4CZ8L04SW1200 | Bedding works for GRP Pipe Line 300 mm - (RD-L-04)-Z8-L04-SW |  | 2027-06-16 → 2027-06-14 (-2d) | -158.02d → -157d |
| RHD4CZ8L04SW1300 | Installing for GRP Pipe Line 300 mm - (RD-L-04)-Z8-L04-SW |  | 2027-06-19 → 2027-06-16 (-3d) | -158.02d → -157d |
| RHD4CZ8L04SW1400 | Primary Test for GRP Pipe Line 300 mm - (RD-L-04)-Z8-L04-SW | 2027-06-19 → 2027-06-17 (-2d) | 2027-06-21 → 2027-06-19 (-2d) | -158.02d → -157d |
| RHD4CZ8L04SW1500 | Backfilling and warning tape works for GRP Pipe Line 300 mm - (RD-L-04)-Z8-L04-SW | 2027-06-21 → 2027-06-20 (-1d) | 2027-06-23 → 2027-06-21 (-2d) | -157.02d → -156d |
| 3790 | **RHD4-02-002-L04-(SW)-UPVC Pipes - 200 mm diameter** |  | 2027-07-01 → 2027-06-29 (-2d) |  |
| RHD4CZ8L04SW2500 | Backfilling and warning tape works for UPVC Pipe Line 200 mm - (RD-L-04)-Z8-L04-SW |  | 2027-07-01 → 2027-06-29 (-2d) | -158.02d → -157d |
| RHD4CZ8L04SW2400 | Primary Test for UPVC Pipe Line 200 mm - (RD-L-04)-Z8-L04-SW | 2027-06-21 → 2027-06-20 (-1d) | 2027-06-24 → 2027-06-22 (-2d) | -158.02d → -157d |
| 7415 | **RHD4-02-002-Z8-L04-Potable Network - PT** | 2027-06-15 → 2027-06-14 (-1d) | 2027-07-31 → 2027-07-28 (-3d) |  |
| 7417 | **RHD4-02-002-L04-(PT)-HDPE Pipes - 160 mm diameter** | 2027-06-15 → 2027-06-14 (-1d) | 2027-07-22 → 2027-07-20 (-2d) |  |
| RHD4CZ8L04PT1101 | Excavation works for HDPE Pipline 160 mm - (RD-L-04)-Z8-L04-PT | 2027-06-15 → 2027-06-14 (-1d) | 2027-06-22 → 2027-06-20 (-2d) | -167.02d → -166d |
| RHD4CZ8L04PT1201 | Bedding works for HDPE Pipline 160 mm - (RD-L-04)-Z8-L04-PT | 2027-06-22 → 2027-06-21 (-1d) | 2027-06-29 → 2027-06-27 (-2d) | -164.02d → -163d |
| RHD4CZ8L04PT1301 | Installing for HDPE Pipline 160 mm - (RD-L-04)-Z8-L04-PT | 2027-06-29 → 2027-06-28 (-1d) | 2027-07-10 → 2027-07-07 (-3d) | -164.02d → -163d |
| RHD4CZ8L04PT1401 | Primary Test for HDPE Pipline 160 mm - (RD-L-04)-Z8-L04-PT | 2027-07-10 → 2027-07-08 (-2d) | 2027-07-14 → 2027-07-12 (-2d) | -164.02d → -163d |
| RHD4CZ8L04PT1501 | Backfilling and warning tape works for HDPE Pipline 160 mm - (RD-L-04)-Z8-L04-PT | 2027-07-14 → 2027-07-13 (-1d) | 2027-07-22 → 2027-07-20 (-2d) | -164.02d → -163d |
| 6478 | **RHD4-02-002-L04-(PT)-Wash out Valve Chambers** | 2027-06-24 → 2027-06-23 (-1d) | 2027-07-04 → 2027-07-01 (-3d) |  |
| RHD4CZ8L04PT2101 | Excavation and Bedding for Wash out Valve Chambers for Potable Water Network - (RD-L-04)-Z8-L04-PT | 2027-06-24 → 2027-06-23 (-1d) | 2027-06-27 → 2027-06-24 (-3d) | -128.02d → -127d |
| RHD4CZ8L04PT2201 | PC works for Wash out Valve Chambers for Potable Water Network - (RD-L-04)-Z8-L04-PT | 2027-06-27 → 2027-06-26 (-1d) | 2027-06-29 → 2027-06-27 (-2d) | -128.02d → -127d |
| RHD4CZ8L04PT2301 | Installation for Wash out Valve Chambers for Potable Water Network - (RD-L-04)-Z8-L04-PT | 2027-06-29 → 2027-06-28 (-1d) | 2027-07-01 → 2027-06-29 (-2d) | -128.02d → -127d |
| RHD4CZ8L04PT2401 | Backfilling works for Wash out Valve Chambers for Potable Water Network - (RD-L-04)-Z8-L04-PT | 2027-07-01 → 2027-06-30 (-1d) | 2027-07-04 → 2027-07-01 (-3d) | -128.02d → -127d |
| 6479 | **RHD4-02-002-L04-(PT)-Wash out Valves** | 2027-07-01 → 2027-06-30 (-1d) | 2027-07-06 → 2027-07-04 (-2d) |  |
| RHD4CZ8L04PT3102 | Installation for Wash out Valves for Potable Water Network - (RD-L-04)-Z8-L04-PT | 2027-07-01 → 2027-06-30 (-1d) | 2027-07-04 → 2027-07-01 (-3d) | -128.02d → -127d |
| RHD4CZ8L04PT3202 | Stem and Service box for Wash out Valves for Potable Water Network - (RD-L-04)-Z8-L04-PT | 2027-07-04 → 2027-07-03 (-1d) | 2027-07-06 → 2027-07-04 (-2d) | -128.02d → -127d |
| 6102 | **RHD4-02-002-L04-(PT)-Air Valve Chambers** | 2027-06-27 → 2027-06-26 (-1d) | 2027-07-06 → 2027-07-04 (-2d) |  |
| RHD4CZ8L04PT2102 | Excavation and Bedding for Air Valve Chambers for Potable Water Network - (RD-L-04)-Z8-L04-PT | 2027-06-27 → 2027-06-26 (-1d) | 2027-06-29 → 2027-06-27 (-2d) | -128.02d → -127d |
| RHD4CZ8L04PT2202 | PC works for Air Valve Chambers for Potable Water Network - (RD-L-04)-Z8-L04-PT | 2027-06-29 → 2027-06-28 (-1d) | 2027-07-01 → 2027-06-29 (-2d) | -128.02d → -127d |
| RHD4CZ8L04PT2302 | Installation for Air Valve Chambers for Potable Water Network - (RD-L-04)-Z8-L04-PT | 2027-07-01 → 2027-06-30 (-1d) | 2027-07-04 → 2027-07-01 (-3d) | -128.02d → -127d |
| RHD4CZ8L04PT2402 | Backfilling works for Air Valve Chambers for Potable Water Network - (RD-L-04)-Z8-L04-PT | 2027-07-04 → 2027-07-03 (-1d) | 2027-07-06 → 2027-07-04 (-2d) | -128.02d → -127d |
| 6103 | **RHD4-02-002-L04-(PT)-Air Valves** | 2027-07-04 → 2027-07-03 (-1d) | 2027-07-08 → 2027-07-06 (-2d) |  |
| RHD4CZ8L04PT3103 | Installation for Air Valves for Potable Water Network - (RD-L-04)-Z8-L04-PT | 2027-07-04 → 2027-07-03 (-1d) | 2027-07-06 → 2027-07-04 (-2d) | -128.02d → -127d |
| RHD4CZ8L04PT3203 | Stem and Service box for Air Valves for Potable Water Network - (RD-L-04)-Z8-L04-PT | 2027-07-06 → 2027-07-05 (-1d) | 2027-07-08 → 2027-07-06 (-2d) | -128.02d → -127d |
| 7416 | **RHD4-02-002-L04-(PT)-HDPE Pipes - 110 mm diameter** | 2027-06-22 → 2027-06-21 (-1d) | 2027-07-04 → 2027-07-01 (-3d) |  |
| RHD4CZ8L04PT1100 | Excavation works for HDPE Pipline 110 mm - (RD-L-04)-Z8-L04-PT | 2027-06-22 → 2027-06-21 (-1d) | 2027-06-24 → 2027-06-22 (-2d) | -167.02d → -166d |
| RHD4CZ8L04PT1200 | Bedding works for HDPE Pipline 110 mm - (RD-L-04)-Z8-L04-PT | 2027-06-24 → 2027-06-23 (-1d) | 2027-06-27 → 2027-06-24 (-3d) | -165.02d → -164d |
| RHD4CZ8L04PT1300 | Installing for HDPE Pipline 110 mm - (RD-L-04)-Z8-L04-PT | 2027-06-27 → 2027-06-26 (-1d) | 2027-06-29 → 2027-06-27 (-2d) | -165.02d → -164d |
| RHD4CZ8L04PT1400 | Primary Test for HDPE Pipline 110 mm - (RD-L-04)-Z8-L04-PT | 2027-06-29 → 2027-06-28 (-1d) | 2027-07-01 → 2027-06-29 (-2d) | -165.02d → -164d |
| RHD4CZ8L04PT1500 | Backfilling and warning tape works for HDPE Pipline 110 mm - (RD-L-04)-Z8-L04-PT | 2027-07-01 → 2027-06-30 (-1d) | 2027-07-04 → 2027-07-01 (-3d) | -165.02d → -164d |
| 7421 | **RHD4-02-002-L04-(PT)-Gate Valves (Direct Buried)** | 2027-07-05 → 2027-07-04 (-1d) | 2027-07-27 → 2027-07-25 (-2d) |  |
| RHD4CZ8L04PT3100 | Installation for Direct Buried Gate Valves - (RD-L-04)-Z8-L04-PT | 2027-07-05 → 2027-07-04 (-1d) | 2027-07-10 → 2027-07-07 (-3d) | -153.02d → -152d |
| RHD4CZ8L04PT3200 | Stem and Service box for Direct Buried Gate Valves - (RD-L-04)-Z8-L04-PT | 2027-07-22 → 2027-07-21 (-1d) | 2027-07-27 → 2027-07-25 (-2d) | -164.02d → -163d |
| 7428 | **RHD4-02-002-L04-(PT)-Fire Hydrant** | 2027-06-24 → 2027-06-23 (-1d) | 2027-07-31 → 2027-07-28 (-3d) |  |
| RHD4CZ8L04PT4100 | Excavation and Bedding and Pipe Installation for Fire Hydrant - (RD-L-04)-Z8-L04-PT | 2027-06-24 → 2027-06-23 (-1d) | 2027-07-05 → 2027-07-03 (-2d) | -167.02d → -166d |
| RHD4CZ8L04PT4200 | Valve Installation for Fire Hydrant - (RD-L-04)-Z8-L04-PT | 2027-07-05 → 2027-07-04 (-1d) | 2027-07-12 → 2027-07-10 (-2d) | -167.02d → -166d |
| RHD4CZ8L04PT4300 | Stem for Fire Hydrant - (RD-L-04)-Z8-L04-PT | 2027-07-12 → 2027-07-11 (-1d) | 2027-07-19 → 2027-07-17 (-2d) | -167.02d → -166d |
| RHD4CZ8L04PT4400 | Fire Installation for Fire Hydrant - (RD-L-04)-Z8-L04-PT | 2027-07-19 → 2027-07-18 (-1d) | 2027-07-26 → 2027-07-24 (-2d) | -167.02d → -166d |

| ID | Task | Start | Finish | Total float |
| --- | --- | --- | --- | --- |
| RHD4CZ8L04PT4500 | Protection Barriers for Fire Hydrant - (RD-L-04)-Z8-L04-PT | 2027-07-26 → 2027-07-25 (-1d) | 2027-07-31 → 2027-07-28 (-3d) | -167.02d → -166d |
| 7430 | **RHD4-02-002-Z8-L04-Irrigation Network - IRR** | 2027-07-04 → 2027-07-03 (-1d) | 2027-08-25 → 2027-08-23 (-2d) |  |
| 7431 | **RHD4-02-002-L04-(IRR)-HDPE Pipes - 160 mm diameter** | 2027-07-06 → 2027-07-05 (-1d) | 2027-08-21 → 2027-08-18 (-3d) |  |
| RHD4CZ8L04IRR1100 | Excavation works for HDPE Pipline 160 mm - (RD-L-04)-Z8-L04-IRR | 2027-07-06 → 2027-07-05 (-1d) | 2027-07-18 → 2027-07-15 (-3d) | -165.02d → -164d |
| RHD4CZ8L04IRR1200 | Bedding works for HDPE Pipline 160 mm - (RD-L-04)-Z8-L04-IRR | 2027-07-18 → 2027-07-17 (-1d) | 2027-07-27 → 2027-07-25 (-2d) | -165.02d → -164d |
| RHD4CZ8L04IRR1300 | Installing for HDPE Pipline 160 mm - (RD-L-04)-Z8-L04-IRR | 2027-07-27 → 2027-07-26 (-1d) | 2027-08-08 → 2027-08-05 (-3d) | -165.02d → -164d |
| RHD4CZ8L04IRR1400 | Primary Test for HDPE Pipline 160 mm - (RD-L-04)-Z8-L04-IRR | 2027-08-08 → 2027-08-07 (-1d) | 2027-08-11 → 2027-08-09 (-2d) | -163.02d → -162d |
| RHD4CZ8L04IRR1500 | Backfilling and warning tape works for HDPE Pipline 160 mm - (RD-L-04)-Z8-L04-IRR | 2027-08-11 → 2027-08-10 (-1d) | 2027-08-21 → 2027-08-18 (-3d) | -163.02d → -162d |
| 7439 | **RHD4-02-002-L04-(IRR)-Gate Valves (Direct Buried)** | 2027-08-03 → 2027-08-02 (-1d) | 2027-08-25 → 2027-08-23 (-2d) |  |
| RHD4CZ8L04IRR3100 | Installation for Direct Buried Gate Valves - (RD-L-04)-Z8-L04-IRR | 2027-08-03 → 2027-08-02 (-1d) | 2027-08-08 → 2027-08-05 (-3d) | -163.02d → -162d |
| RHD4CZ8L04IRR3200 | Stem and Service box for Direct Buried Gate Valves - (RD-L-04)-Z8-L04-IRR | 2027-08-21 → 2027-08-19 (-2d) | 2027-08-25 → 2027-08-23 (-2d) | -163.02d → -162d |
| 1770 | **RHD4-02-002-L04-(IRR)-Air Valves** | 2027-08-17 → 2027-08-16 (-1d) | 2027-08-22 → 2027-08-19 (-3d) |  |
| RHD4CZ8L04IRR3103 | Installation for Air Valves for Irrigation Network - (RD-L-04)-Z8-L04-IRR | 2027-08-17 → 2027-08-16 (-1d) | 2027-08-19 → 2027-08-17 (-2d) | -164.02d → -163d |
| RHD4CZ8L04IRR3203 | Stem and Service box for Air Valves for Irrigation Network - (RD-L-04)-Z8-L04-IRR | 2027-08-19 → 2027-08-18 (-1d) | 2027-08-22 → 2027-08-19 (-3d) | -164.02d → -163d |
| 6685 | **RHD4-02-002-L04-(IRR)-Wash out Chamber** | 2027-08-08 → 2027-08-07 (-1d) | 2027-08-17 → 2027-08-15 (-2d) |  |
| RHD4CZ8L04IRR2101 | Excavation and Bedding for Wash out Chamber for Irrigation Network - (RD-L-04)-Z8-L04-IRR | 2027-08-08 → 2027-08-07 (-1d) | 2027-08-10 → 2027-08-08 (-2d) | -165.02d → -164d |
| RHD4CZ8L04IRR2201 | PC works for Wash out Chamber for Irrigation Network - (RD-L-04)-Z8-L04-IRR | 2027-08-10 → 2027-08-09 (-1d) | 2027-08-12 → 2027-08-10 (-2d) | -164.02d → -163d |
| RHD4CZ8L04IRR2301 | Installation for Wash out Chamber for Irrigation Network - (RD-L-04)-Z8-L04-IRR | 2027-08-12 → 2027-08-11 (-1d) | 2027-08-15 → 2027-08-12 (-3d) | -164.02d → -163d |
| RHD4CZ8L04IRR2401 | Backfilling works for Wash out Chamber for Irrigation Network - (RD-L-04)-Z8-L04-IRR | 2027-08-15 → 2027-08-14 (-1d) | 2027-08-17 → 2027-08-15 (-2d) | -164.02d → -163d |
| 6686 | **RHD4-02-002-L04-(IRR)-Wash out Valves** | 2027-08-15 → 2027-08-14 (-1d) | 2027-08-19 → 2027-08-17 (-2d) |  |
| RHD4CZ8L04IRR3102 | Installation for Wash out Valve for Irrigation Network - (RD-L-04)-Z8-L04-IRR | 2027-08-15 → 2027-08-14 (-1d) | 2027-08-17 → 2027-08-15 (-2d) | -164.02d → -163d |
| RHD4CZ8L04IRR3202 | Stem and Service box for Wash out Valve for Irrigation Network - (RD-L-04)-Z8-L04-IRR | 2027-08-17 → 2027-08-16 (-1d) | 2027-08-19 → 2027-08-17 (-2d) | -164.02d → -163d |
| 1769 | **RHD4-02-002-L04-(IRR)-Air Valve Chamber** | 2027-08-10 → 2027-08-09 (-1d) | 2027-08-19 → 2027-08-17 (-2d) |  |
| RHD4CZ8L04IRR2102 | Excavation and Bedding for Valve Chamber for Irrigation Network - (RD-L-04)-Z8-L04-IRR | 2027-08-10 → 2027-08-09 (-1d) | 2027-08-12 → 2027-08-10 (-2d) | -165.02d → -164d |
| RHD4CZ8L04IRR2202 | PC works for Valve Chamber for Irrigation Network - (RD-L-04)-Z8-L04-IRR | 2027-08-12 → 2027-08-11 (-1d) | 2027-08-15 → 2027-08-12 (-3d) | -165.02d → -164d |
| RHD4CZ8L04IRR2302 | Installation for Valve Chamber for Irrigation Network - (RD-L-04)-Z8-L04-IRR | 2027-08-15 → 2027-08-14 (-1d) | 2027-08-17 → 2027-08-15 (-2d) | -165.02d → -164d |
| RHD4CZ8L04IRR2402 | Backfilling works for Valve Chamber for Irrigation Network - (RD-L-04)-Z8-L04-IRR | 2027-08-17 → 2027-08-16 (-1d) | 2027-08-19 → 2027-08-17 (-2d) | -165.02d → -164d |
| 1771 | **RHD4-02-002-L04-(IRR)-Concrete Encasement** | 2027-08-08 → 2027-08-07 (-1d) | 2027-08-10 → 2027-08-08 (-2d) |  |
| RHD4CZ8L04IRR5100 | Pipe Encasement for Irrigation Pipelines - (RD-L-04)-Z8-L04-IRR | 2027-08-08 → 2027-08-07 (-1d) | 2027-08-10 → 2027-08-08 (-2d) | -158.02d → -157d |
| 3651 | **RHD4-02-002-L04-(IRR)-HDPE Pipes - 250 mm diameter** | 2027-07-04 → 2027-07-03 (-1d) | 2027-07-15 → 2027-07-13 (-2d) |  |
| RHD4CZ8L04IRR1103 | Excavation works for HDPE Pipline 250 mm - (RD-L-04)-Z8-L04-IRR | 2027-07-04 → 2027-07-03 (-1d) | 2027-07-06 → 2027-07-04 (-2d) | -165.02d → -164d |
| RHD4CZ8L04IRR1203 | Bedding works for HDPE Pipline 250 mm - (RD-L-04)-Z8-L04-IRR | 2027-07-06 → 2027-07-05 (-1d) | 2027-07-08 → 2027-07-06 (-2d) | -161.02d → -160d |
| RHD4CZ8L04IRR1303 | Installing for HDPE Pipline 250 mm - (RD-L-04)-Z8-L04-IRR | 2027-07-08 → 2027-07-07 (-1d) | 2027-07-11 → 2027-07-08 (-3d) | -161.02d → -160d |
| RHD4CZ8L04IRR1403 | Primary Test for HDPE Pipline 250 mm - (RD-L-04)-Z8-L04-IRR | 2027-07-11 → 2027-07-10 (-1d) | 2027-07-13 → 2027-07-11 (-2d) | -161.02d → -160d |
| RHD4CZ8L04IRR1503 | Backfilling and warning tape works for HDPE Pipline 250 mm - (RD-L-04)-Z8-L04-IRR | 2027-07-13 → 2027-07-12 (-1d) | 2027-07-15 → 2027-07-13 (-2d) | -161.02d → -160d |
| 7464 | **RHD4-02-002-Z8-L04-Medium Voltage Network - MV** | 2027-06-30 → 2027-06-28 (-2d) | 2027-07-13 → 2027-07-10 (-3d) |  |
| 7465 | **RHD4-02-002-L04-(MV)-Medium Voltage cable trench** | 2027-06-30 → 2027-06-28 (-2d) | 2027-07-13 → 2027-07-10 (-3d) |  |
| RHD4CZ8L04MV1100 | Excavation for Medium Voltage Trench - (RD-L-04)-Z8-L04-MV | 2027-06-30 → 2027-06-28 (-2d) | 2027-07-03 → 2027-06-29 (-4d) | -146.02d → -144d |
| RHD4CZ8L04MV1200 | Trench Backfilling for Medium Voltage Network - (RD-L-04)-Z8-L04-MV | 2027-07-11 → 2027-07-08 (-3d) | 2027-07-13 → 2027-07-10 (-3d) | -136.02d → -134d |
| 7467 | **RHD4-02-002-L04-(MV)-Medium Voltage cables 3Cx 500 mm²** | 2027-07-03 → 2027-06-30 (-3d) | 2027-07-11 → 2027-07-07 (-4d) |  |
| RHD4CZ8L04MV3100 | Installation of Medium Voltage Cables 3Cx 500 mm² - (RD-L-04)-Z8-L04-MV | 2027-07-03 → 2027-06-30 (-3d) | 2027-07-06 → 2027-07-03 (-3d) | -136.02d → -134d |
| RHD4CZ8L04MV3200 | Joints Installation of Medium Voltage Cables 3Cx 500 mm² - (RD-L-04)-Z8-L04-MV | 2027-07-06 → 2027-07-04 (-2d) | 2027-07-08 → 2027-07-05 (-3d) | -136.02d → -134d |
| RHD4CZ8L04MV3300 | Testing of Medium Voltage Cables 3Cx 500 mm² - (RD-L-04)-Z8-L04-MV | 2027-07-08 → 2027-07-06 (-2d) | 2027-07-11 → 2027-07-07 (-4d) | -136.02d → -134d |
| 7471 | **RHD4-02-002-Z8-L04-Low Voltage Network - LV** | 2027-08-21 → 2027-08-19 (-2d) | 2027-08-30 → 2027-08-28 (-2d) |  |
| 7472 | **RHD4-02-002-L04-(LV)-Low Voltage duct banks** | 2027-08-21 → 2027-08-19 (-2d) | 2027-08-30 → 2027-08-28 (-2d) |  |
| RHD4CZ8L04LV2100 | Excavation of Duct Banks for Low Voltage Network - (RD-L-04)-Z8-L04-LV | 2027-08-21 → 2027-08-19 (-2d) | 2027-08-23 → 2027-08-21 (-2d) | -162.02d → -161d |
| RHD4CZ8L04LV2200 | Installation of Duct Banks for Low Voltage Network - (RD-L-04)-Z8-L04-LV | 2027-08-23 → 2027-08-22 (-1d) | 2027-08-25 → 2027-08-23 (-2d) | -161.02d → -160d |
| RHD4CZ8L04LV2300 | Pouring of Duct Banks for Low Voltage Network - (RD-L-04)-Z8-L04-LV | 2027-08-25 → 2027-08-24 (-1d) | 2027-08-28 → 2027-08-25 (-3d) | -159.02d → -158d |
| RHD4CZ8L04LV2400 | Backfilling of Duct Banks for Low Voltage Network - (RD-L-04)-Z8-L04-LV | 2027-08-28 → 2027-08-26 (-2d) | 2027-08-30 → 2027-08-28 (-2d) | -152.02d → -151d |
| 7477 | **RHD4-02-002-Z8-L04-Street Lighting Network - SL** | 2027-07-13 → 2027-07-11 (-2d) | 2027-10-20 → 2027-10-17 (-3d) |  |
| 7478 | **RHD4-02-002-L04-(SL)-Street Lighting duct banks** | 2027-08-23 → 2027-08-22 (-1d) | 2027-09-06 → 2027-09-04 (-2d) |  |
| RHD4CZ8L04SL2100 | Excavation of Duct Banks for Street Lighting Network - (RD-L-04)-Z8-L04-SL | 2027-08-23 → 2027-08-22 (-1d) | 2027-08-26 → 2027-08-24 (-2d) | -162.02d → -161d |
| RHD4CZ8L04SL2200 | Installation of Duct Banks for Street Lighting Network - (RD-L-04)-Z8-L04-SL | 2027-08-26 → 2027-08-25 (-1d) | 2027-08-31 → 2027-08-29 (-2d) | -162.02d → -161d |
| RHD4CZ8L04SL2300 | Pouring of Duct Banks for Street Lighting Network - (RD-L-04)-Z8-L04-SL | 2027-08-31 → 2027-08-30 (-1d) | 2027-09-04 → 2027-09-01 (-3d) | -162.02d → -161d |
| RHD4CZ8L04SL2400 | Backfilling of Duct Banks for Street Lighting Network - (RD-L-04)-Z8-L04-SL | 2027-09-04 → 2027-09-02 (-2d) | 2027-09-06 → 2027-09-04 (-2d) | -162.02d → -161d |
| 7479 | **RHD4-02-002-L04-(SL)-Street Lighting Drawpit** | 2027-07-13 → 2027-07-11 (-2d) | 2027-07-18 → 2027-07-14 (-4d) |  |
| RHD4CZ8L04SL5100 | Excavation of Drawpit size 600x600x900mm for Street Lighting Network - (RD-L-04)-Z8-L04-SL | 2027-07-13 → 2027-07-11 (-2d) | 2027-07-15 → 2027-07-12 (-3d) | -136.02d → -134d |
| RHD4CZ8L04SL5200 | Installation of Drawpit size 600x600x900mm for Street Lighting Network - (RD-L-04)-Z8-L04-SL | 2027-07-15 → 2027-07-13 (-2d) | 2027-07-18 → 2027-07-14 (-4d) | -136.02d → -134d |
| 7480 | **RHD4-02-002-L04-(SL)-Street Lighting cables** | 2027-07-18 → 2027-07-15 (-3d) | 2027-09-05 → 2027-09-01 (-4d) |  |
| RHD4CZ8L04SL3100 | Excavation for Street Lighting Cables for Street Lighting Network - (RD-L-04)-Z8-L04-SL | 2027-07-18 → 2027-07-15 (-3d) | 2027-08-02 → 2027-07-29 (-4d) | -136.02d → -134d |
| RHD4CZ8L04SL3200 | Cable Laying of Street Lighting Cables for Street Lighting Network - (RD-L-04)-Z8-L04-SL | 2027-08-02 → 2027-07-31 (-2d) | 2027-08-15 → 2027-08-11 (-4d) | -136.02d → -134d |
| RHD4CZ8L04SL3300 | Warning tape and Backfill for Street Lighting Cables for Street Lighting Network - (RD-L-04)-Z8-L04-SL | 2027-08-15 → 2027-08-12 (-3d) | 2027-08-28 → 2027-08-24 (-4d) | -136.02d → -134d |
| RHD4CZ8L04SL3400 | Testing of Street Lighting Cables for Street Lighting Network - (RD-L-04)-Z8-L04-SL | 2027-08-28 → 2027-08-25 (-3d) | 2027-09-05 → 2027-09-01 (-4d) | -136.02d → -134d |
| 7481 | **RHD4-02-002-L04-(SL)-Street Lighting Poles** | 2027-09-05 → 2027-09-02 (-3d) | 2027-10-20 → 2027-10-17 (-3d) |  |
| RHD4CZ8L04SL1100 | Excavation for RC Base for Lighting Poles for Street Lighting Network - (RD-L-04)-Z8-L04-SL | 2027-09-05 → 2027-09-02 (-3d) | 2027-09-13 → 2027-09-09 (-4d) | -136.02d → -134d |
| RHD4CZ8L04SL1200 | Installation for RC Base for Lighting Poles for Street Lighting Network - (RD-L-04)-Z8-L04-SL | 2027-09-13 → 2027-09-11 (-2d) | 2027-09-21 → 2027-09-18 (-3d) | -136.02d → -134d |
| RHD4CZ8L04SL1300 | Backfill for RC Base for Lighting Poles for Street Lighting Network - (RD-L-04)-Z8-L04-SL | 2027-09-21 → 2027-09-19 (-2d) | 2027-09-30 → 2027-09-27 (-3d) | -136.02d → -134d |
| RHD4CZ8L04SL1400 | Installation for Lighting Poles for Street Lighting Network - (RD-L-04)-Z8-L04-SL | 2027-09-30 → 2027-09-28 (-2d) | 2027-10-12 → 2027-10-09 (-3d) | -136.02d → -134d |
| RHD4CZ8L04SL1500 | Luminaire Installation for Lighting Poles for Street Lighting Network - (RD-L-04)-Z8-L04-SL | 2027-10-12 → 2027-10-10 (-2d) | 2027-10-20 → 2027-10-17 (-3d) | -136.02d → -134d |
| 7483 | **RHD4-02-002-L04-(SL)-Street Lighting Earthing System** | 2027-10-12 → 2027-10-10 (-2d) | 2027-10-14 → 2027-10-11 (-3d) |  |

| ID | Task | Start | Finish | Total float |
| --- | --- | --- | --- | --- |
| RHD4CZ8L04SL6100 | Installation of Earthing for Lighting Poles and Fedder Pillers for Street Lighting Network - (RD-L-04)-Z8-L04-SL | 2027-10-12 → 2027-10-10 (-2d) | 2027-10-14 → 2027-10-11 (-3d) | -133.02d → -131d |
| 7489 | **RHD4-02-002-Z8-L04-Telecommunications Network - TC** | 2027-07-06 → 2027-07-05 (-1d) | 2027-09-11 → 2027-09-08 (-3d) |  |
| 7490 | **RHD4-02-002-L04-(TC)-Telecommunications Ducts** | 2027-07-06 → 2027-07-05 (-1d) | 2027-09-01 → 2027-08-30 (-2d) |  |
| RHD4CZ8L04TC2100 | Excavation of HDPE Ducts for Telecom Network - (RD-L-04)-Z8-L04-TC | 2027-07-06 → 2027-07-05 (-1d) | 2027-07-22 → 2027-07-20 (-2d) | -158.02d → -157d |
| RHD4CZ8L04TC2200 | Installation of HDPE Ducts for Telecom Network - (RD-L-04)-Z8-L04-TC | 2027-07-22 → 2027-07-21 (-1d) | 2027-08-16 → 2027-08-14 (-2d) | -158.02d → -157d |
| RHD4CZ8L04TC2400 | Backfilling of HDPE Ducts for Telecom Network - (RD-L-04)-Z8-L04-TC | 2027-08-16 → 2027-08-15 (-1d) | 2027-09-01 → 2027-08-30 (-2d) | -158.02d → -157d |
| 7491 | **RHD4-02-002-L04-(TC)-Telecommunications Manholes** | 2027-09-01 → 2027-08-31 (-1d) | 2027-09-11 → 2027-09-08 (-3d) |  |
| RHD4CZ8L04TC5100 | Excavation for Manholes for Telecom Network - (RD-L-04)-Z8-L04-TC | 2027-09-01 → 2027-08-31 (-1d) | 2027-09-06 → 2027-09-04 (-2d) | -158.02d → -157d |
| RHD4CZ8L04TC5200 | Installation of Manholes for Telecom Network - (RD-L-04)-Z8-L04-TC | 2027-09-06 → 2027-09-05 (-1d) | 2027-09-11 → 2027-09-08 (-3d) | -158.02d → -157d |
| 7493 | **RHD4-02-002-Z8-L04-Information and Communication Technologies - ICT** | 2027-02-13 → 2027-02-09 (-4d) | 2027-11-13 → 2027-11-10 (-3d) |  |
| 7494 | **RHD4-02-002-L04-(ICT)-Information and Communication Technologies Ducts** | 2027-09-11 → 2027-09-09 (-2d) | 2027-11-03 → 2027-11-01 (-2d) |  |
| RHD4CZ8L04ICT2100 | Excavation of HDPE Ducts for ICT Network - (RD-L-04)-Z8-L04-ICT | 2027-09-11 → 2027-09-09 (-2d) | 2027-10-03 → 2027-09-30 (-3d) | -158.02d → -157d |
| RHD4CZ8L04ICT2200 | Installation of HDPE Ducts for ICT Network - (RD-L-04)-Z8-L04-ICT | 2027-10-03 → 2027-10-02 (-1d) | 2027-10-13 → 2027-10-11 (-2d) | -158.02d → -157d |
| RHD4CZ8L04ICT2400 | Backfilling of HDPE Ducts for ICT Network - (RD-L-04)-Z8-L04-ICT | 2027-10-13 → 2027-10-12 (-1d) | 2027-11-03 → 2027-11-01 (-2d) | -158.02d → -157d |
| 7495 | **RHD4-02-002-L04-(ICT)-Information and Communication Technologies Manholes** | 2027-11-03 → 2027-11-02 (-1d) | 2027-11-13 → 2027-11-10 (-3d) |  |
| RHD4CZ8L04ICT5100 | Excavation for Manholes for ICT Network - (RD-L-04)-Z8-L04-ICT | 2027-11-03 → 2027-11-02 (-1d) | 2027-11-08 → 2027-11-06 (-2d) | -158.02d → -157d |
| RHD4CZ8L04ICT5200 | Installation of Manholes for ICT Network - (RD-L-04)-Z8-L04-ICT | 2027-11-08 → 2027-11-07 (-1d) | 2027-11-13 → 2027-11-10 (-3d) | -158.02d → -157d |
| 7496 | **RHD4-02-002-L04-(ICT)-Information and Communication Technologies Road Crossings** | 2027-02-13 → 2027-02-09 (-4d) | 2027-02-23 → 2027-02-17 (-6d) |  |
| RHD4CZ8L04ICT3100 | Excavation for Road Crossings for ICT Network - (RD-L-04)-Z8-L04-ICT | 2027-02-13 → 2027-02-09 (-4d) | 2027-02-15 → 2027-02-10 (-5d) | -183.02d → -180d |
| RHD4CZ8L04ICT3200 | Installation of Road Crossings for ICT Network - (RD-L-04)-Z8-L04-ICT | 2027-02-15 → 2027-02-11 (-4d) | 2027-02-17 → 2027-02-13 (-4d) | -183.02d → -180d |
| RHD4CZ8L04ICT3300 | Pouring of Road Crossings for ICT Network - (RD-L-04)-Z8-L04-ICT | 2027-02-17 → 2027-02-14 (-3d) | 2027-02-20 → 2027-02-15 (-5d) | -183.02d → -180d |
| RHD4CZ8L04ICT3400 | Backfilling of Road Crossings for ICT Network - (RD-L-04)-Z8-L04-ICT | 2027-02-20 → 2027-02-16 (-4d) | 2027-02-23 → 2027-02-17 (-6d) | -183.02d → -180d |
| 7497 | **RHD4-02-002-Z8-L04-Security Network - CCTV** | 2027-11-13 → 2027-11-11 (-2d) | 2027-12-13 → 2027-12-11 (-2d) |  |
| 7498 | **RHD4-02-002-L04-(CCTV)-Civil Works** | 2027-11-13 → 2027-11-11 (-2d) | 2027-11-18 → 2027-11-16 (-2d) |  |
| RHD4CZ8L04CCTV2100 | Civil Works for Security Network - (RD-L-04)-Z8-L04-CCTV | 2027-11-13 → 2027-11-11 (-2d) | 2027-11-18 → 2027-11-16 (-2d) | -158.02d → -157d |
| 7499 | **RHD4-02-002-L04-(CCTV)-CCTV Poles** | 2027-11-18 → 2027-11-17 (-1d) | 2027-11-30 → 2027-11-28 (-2d) |  |
| RHD4CZ8L04CCTV1100 | Excavation for RC Base for CCTV Poles for Security Network - (RD-L-04)-Z8-L04-CCTV | 2027-11-18 → 2027-11-17 (-1d) | 2027-11-21 → 2027-11-18 (-3d) | -158.02d → -157d |
| RHD4CZ8L04CCTV1200 | Installation for RC Base for CCTV Poles for Security Network - (RD-L-04)-Z8-L04-CCTV | 2027-11-21 → 2027-11-20 (-1d) | 2027-11-23 → 2027-11-21 (-2d) | -158.02d → -157d |
| RHD4CZ8L04CCTV1300 | Backfill for RC Base for CCTV Poles for Security Network - (RD-L-04)-Z8-L04-CCTV | 2027-11-23 → 2027-11-22 (-1d) | 2027-11-25 → 2027-11-23 (-2d) | -158.02d → -157d |
| RHD4CZ8L04CCTV1400 | Installation for CCTV Poles for Security Network - (RD-L-04)-Z8-L04-CCTV | 2027-11-25 → 2027-11-24 (-1d) | 2027-11-28 → 2027-11-25 (-3d) | -158.02d → -157d |
| RHD4CZ8L04CCTV1500 | Protection post Installation for CCTV Poles for Security Network - (RD-L-04)-Z8-L04-CCTV | 2027-11-28 → 2027-11-27 (-1d) | 2027-11-30 → 2027-11-28 (-2d) | -158.02d → -157d |
| 7500 | **RHD4-02-002-L04-(CCTV)-Camera** | 2027-11-30 → 2027-11-29 (-1d) | 2027-12-02 → 2027-11-30 (-2d) |  |
| RHD4CZ8L04CCTV3100 | Installation for Cameras for Security Network - (RD-L-04)-Z8-L04-CCTV | 2027-11-30 → 2027-11-29 (-1d) | 2027-12-02 → 2027-11-30 (-2d) | -158.02d → -157d |
| 7501 | **RHD4-02-002-L04-(CCTV)-Power and Infrastructure** | 2027-11-28 → 2027-11-27 (-1d) | 2027-11-30 → 2027-11-28 (-2d) |  |
| RHD4CZ8L04CCTV4100 | Installation of Power outlet, UPS and midspan for PTZ Camerafor Cameras for Security Network - (RD-L-04)-Z8-L04-CCTV | 2027-11-28 → 2027-11-27 (-1d) | 2027-11-30 → 2027-11-28 (-2d) | -158.02d → -157d |
| 7503 | **RHD4-02-002-L04-(CCTV)-CCTV Panels and Components** | 2027-12-02 → 2027-12-01 (-1d) | 2027-12-13 → 2027-12-11 (-2d) |  |
| RHD4CZ8L04CCTV6100 | Installation for CCTV Panels for Security Network - (RD-L-04)-Z8-L04-CCTV | 2027-12-02 → 2027-12-01 (-1d) | 2027-12-13 → 2027-12-11 (-2d) | -158.02d → -157d |
| 7514 | **RHD4-02-002-Z8-C014** | 2027-02-23 → 2027-02-18 (-5d) | 2028-02-07 → 2028-02-03 (-4d) |  |
| 7693 | **RHD4-02-002-Z8-C014-Road Works - RD** | 2027-02-23 → 2027-02-18 (-5d) | 2028-02-07 → 2028-02-03 (-4d) |  |
| 7696 | **RHD4-02-002-C014-(RD)-Bituminous base course Two Layers, including (MC1)&(RC2)** | 2027-03-23 → 2027-03-20 (-3d) | 2028-01-23 → 2028-01-19 (-4d) |  |
| RHD4CZ8C014RD3100 | Supply, lay and Asphaltic base course including Prime Coat (MC1) for 1st Layer - (RD-C-1/4)-Z8-C014-RD | 2027-03-23 → 2027-03-20 (-3d) | 2027-03-28 → 2027-03-23 (-5d) | -179.02d → -176d |
| RHD4CZ8C014RD3200 | Supply, lay and Asphaltic base course including Tack Coat (RC2) for 2nd Layer - (RD-C-1/4)-Z8-C014-RD | 2028-01-18 → 2028-01-16 (-2d) | 2028-01-23 → 2028-01-19 (-4d) | -169.02d → -167d |
| 7698 | **RHD4-02-002-C014-(RD)-Precast Concrete Curb** | 2028-01-23 → 2028-01-20 (-3d) | 2028-01-29 → 2028-01-25 (-4d) |  |
| RHD4CZ8C014RD5100 | Supply and installation Precast Concrete Kerb for Roads - (RD-C-1/4)-Z8-C014-RD | 2028-01-23 → 2028-01-20 (-3d) | 2028-01-29 → 2028-01-25 (-4d) | -169.02d → -167d |
| 7694 | **RHD4-02-002-C014-(RD)-Subgrade** | 2027-02-23 → 2027-02-18 (-5d) | 2027-03-13 → 2027-03-04 (-9d) |  |
| RHD4CZ8C014RD1100 | Supply, lay and compaction subgrade compacted thickness 300 mm for Roads - (RD-C-1/4)-Z8-C014-RD | 2027-02-23 → 2027-02-18 (-5d) | 2027-03-13 → 2027-03-04 (-9d) | -179.02d → -176d |
| 7695 | **RHD4-02-002-C014-(RD)-Aggregate Base Course** | 2027-03-13 → 2027-03-06 (-7d) | 2027-03-23 → 2027-03-18 (-5d) |  |
| RHD4CZ8C014RD2100 | Supply, lay and compaction Aggregate base course compacted thickness 300 mmfor Roads - (RD-C-1/4)-Z8-C014-RD | 2027-03-13 → 2027-03-06 (-7d) | 2027-03-23 → 2027-03-18 (-5d) | -179.02d → -176d |
| 7701 | **RHD4-02-002-C014-(RD)-Traffic Signage** | 2028-01-29 → 2028-01-26 (-3d) | 2028-02-07 → 2028-02-03 (-4d) |  |
| RHD4CZ8C014RD8100 | Installation of Traffic Signage for Road Network - (RD-C-1/4)-Z8-C014-RD | 2028-01-29 → 2028-01-26 (-3d) | 2028-02-07 → 2028-02-03 (-4d) | -134.02d → -132d |
| 7697 | **RHD4-02-002-C014-(RD)-Bituminous concrete wearing course including tack coat (RC2)** | 2028-01-29 → 2028-01-26 (-3d) | 2028-01-31 → 2028-01-27 (-4d) |  |
| RHD4CZ8C014RD4100 | Supply, lay and compaction Asphaltic wearing course including tack Coat (RC2)for Road Network - (RD-C-1/4)-Z8-C014-RD | 2028-01-29 → 2028-01-26 (-3d) | 2028-01-31 → 2028-01-27 (-4d) | -169.02d → -167d |
| 7700 | **RHD4-02-002-C014-(RD)-Pavement Marking** | 2028-01-31 → 2028-01-29 (-2d) | 2028-02-05 → 2028-02-01 (-4d) |  |
| RHD4CZ8C014RD7100 | Pavement Markings for Road Network - (RD-C-1/4)-Z8-C014-RD | 2028-01-31 → 2028-01-29 (-2d) | 2028-02-05 → 2028-02-01 (-4d) | -169.02d → -167d |
| 7240 | **RHD4-02-002-Z8-C014-Irrigation Network - IRR** | 2027-06-23 → 2027-06-22 (-1d) | 2027-07-18 → 2027-07-15 (-3d) |  |
| 8188 | **RHD4-02-002-C014-(IRR)-HDPE Pipes - 180 mm diameter** | 2027-06-23 → 2027-06-22 (-1d) | 2027-07-17 → 2027-07-14 (-3d) |  |
| RHD4CZ8C014IRR1101 | Excavation works for HDPE Pipline 180 mm - (RD-C-1/4)-Z8-C014-IRR | 2027-06-23 → 2027-06-22 (-1d) | 2027-06-29 → 2027-06-27 (-2d) | -143.02d → -142d |
| RHD4CZ8C014IRR1201 | Bedding works for HDPE Pipline 180 mm - (RD-C-1/4)-Z8-C014-IRR | 2027-06-29 → 2027-06-28 (-1d) | 2027-07-04 → 2027-07-01 (-3d) | -142.02d → -141d |
| RHD4CZ8C014IRR1301 | Installing for HDPE Pipline 180 mm - (RD-C-1/4)-Z8-C014-IRR | 2027-07-04 → 2027-07-03 (-1d) | 2027-07-10 → 2027-07-07 (-3d) | -142.02d → -141d |
| RHD4CZ8C014IRR1401 | Primary Test for HDPE Pipline 180 mm - (RD-C-1/4)-Z8-C014-IRR | 2027-07-10 → 2027-07-08 (-2d) | 2027-07-12 → 2027-07-10 (-2d) | -142.02d → -141d |
| RHD4CZ8C014IRR1501 | Backfilling and warning tape works for HDPE Pipline 180 mm - (RD-C-1/4)-Z8-C014-IRR | 2027-07-12 → 2027-07-11 (-1d) | 2027-07-17 → 2027-07-14 (-3d) | -142.02d → -141d |
| 6685 | **RHD4-02-002-C014-(IRR)-Wash out Chamber** | 2027-07-06 → 2027-07-05 (-1d) | 2027-07-15 → 2027-07-13 (-2d) |  |
| RHD4CZ8C014IRR2101 | Excavation and Bedding for Wash out Chamber for Irrigation Network - (RD-C-1/4)-Z8-C014-IRR | 2027-07-06 → 2027-07-05 (-1d) | 2027-07-08 → 2027-07-06 (-2d) | -143.02d → -142d |
| RHD4CZ8C014IRR2201 | PC works for Wash out Chamber for Irrigation Network - (RD-C-1/4)-Z8-C014-IRR | 2027-07-08 → 2027-07-07 (-1d) | 2027-07-11 → 2027-07-08 (-3d) | -143.02d → -142d |
| RHD4CZ8C014IRR2301 | Installation for Wash out Chamber for Irrigation Network - (RD-C-1/4)-Z8-C014-IRR | 2027-07-11 → 2027-07-10 (-1d) | 2027-07-13 → 2027-07-11 (-2d) | -143.02d → -142d |
| RHD4CZ8C014IRR2401 | Backfilling works for Wash out Chamber for Irrigation Network - (RD-C-1/4)-Z8-C014-IRR | 2027-07-13 → 2027-07-12 (-1d) | 2027-07-15 → 2027-07-13 (-2d) | -143.02d → -142d |
| 6686 | **RHD4-02-002-C014-(IRR)-Wash out Valves** | 2027-07-13 → 2027-07-12 (-1d) | 2027-07-18 → 2027-07-15 (-3d) |  |
| RHD4CZ8C014IRR3102 | Installation for Wash out Valve for Irrigation Network - (RD-C-1/4)-Z8-C014-IRR | 2027-07-13 → 2027-07-12 (-1d) | 2027-07-15 → 2027-07-13 (-2d) | -143.02d → -142d |
| RHD4CZ8C014IRR3202 | Stem and Service box for Wash out Valve for Irrigation Network - (RD-C-1/4)-Z8-C014-IRR | 2027-07-15 → 2027-07-14 (-1d) | 2027-07-18 → 2027-07-15 (-3d) | -143.02d → -142d |
| 6107 | **RHD4-02-002-C014-(IRR)-HDPE Pipes - 160 mm diameter** | 2027-06-29 → 2027-06-28 (-1d) | 2027-07-11 → 2027-07-08 (-3d) |  |

| ID | Task | Start | Finish | Total float |
| --- | --- | --- | --- | --- |
| RHD4CZ8C014IRR1100 | Excavation works for HDPE Pipline 160 mm - (RD-C-1/4)-Z8-C014-IRR | 2027-06-29 → 2027-06-28 (-1d) | 2027-07-01 → 2027-06-29 (-2d) | -143.02d → -142d |
| RHD4CZ8C014IRR1200 | Bedding works for HDPE Pipline 160 mm - (RD-C-1/4)-Z8-C014-IRR | 2027-07-01 → 2027-06-30 (-1d) | 2027-07-04 → 2027-07-01 (-3d) | -143.02d → -142d |
| RHD4CZ8C014IRR1300 | Installing for HDPE Pipline 160 mm - (RD-C-1/4)-Z8-C014-IRR | 2027-07-04 → 2027-07-03 (-1d) | 2027-07-06 → 2027-07-04 (-2d) | -143.02d → -142d |
| RHD4CZ8C014IRR1400 | Primary Test for HDPE Pipline 160 mm - (RD-C-1/4)-Z8-C014-IRR | 2027-07-06 → 2027-07-05 (-1d) | 2027-07-08 → 2027-07-06 (-2d) | -142.02d → -141d |
| RHD4CZ8C014IRR1500 | Backfilling and warning tape works for HDPE Pipline 160 mm - (RD-C-1/4)-Z8-C014-IRR | 2027-07-08 → 2027-07-07 (-1d) | 2027-07-11 → 2027-07-08 (-3d) | -142.02d → -141d |
| 6115 | **RHD4-02-002-C014-(IRR)-Gate Valves (Direct Buried)** | 2027-07-04 → 2027-07-03 (-1d) | 2027-07-13 → 2027-07-11 (-2d) |  |
| RHD4CZ8C014IRR3100 | Installation for Direct Buried Gate Valves - (RD-C-1/4)-Z8-C014-IRR | 2027-07-04 → 2027-07-03 (-1d) | 2027-07-06 → 2027-07-04 (-2d) | -138.02d → -137d |
| RHD4CZ8C014IRR3200 | Stem and Service box for Direct Buried Gate Valves - (RD-C-1/4)-Z8-C014-IRR | 2027-07-11 → 2027-07-10 (-1d) | 2027-07-13 → 2027-07-11 (-2d) | -142.02d → -141d |
| 7653 | **RHD4-02-002-Z8-C014-Medium Voltage Network - MV** | 2027-07-03 → 2027-06-30 (-3d) | 2027-07-29 → 2027-07-26 (-3d) |  |
| 7654 | **RHD4-02-002-C014-(MV)-Medium Voltage cable trench** | 2027-07-03 → 2027-06-30 (-3d) | 2027-07-12 → 2027-07-08 (-4d) |  |
| RHD4CZ8C014MV1100 | Excavation for Medium Voltage Trench - (RD-C-1/4)-Z8-C014-MV | 2027-07-03 → 2027-06-30 (-3d) | 2027-07-06 → 2027-07-03 (-3d) | -146.02d → -144d |
| RHD4CZ8C014MV1200 | Trench Backfilling for Medium Voltage Network - (RD-C-1/4)-Z8-C014-MV | 2027-07-08 → 2027-07-06 (-2d) | 2027-07-12 → 2027-07-08 (-4d) | -146.02d → -144d |
| 7656 | **RHD4-02-002-C014-(MV)-Medium Voltage cables 3Cx 500 mm²** | 2027-07-06 → 2027-07-04 (-2d) | 2027-07-29 → 2027-07-26 (-3d) |  |
| RHD4CZ8C014MV3100 | Installation of Medium Voltage Cables 3Cx 500 mm² - (RD-C-1/4)-Z8-C014-MV | 2027-07-06 → 2027-07-04 (-2d) | 2027-07-13 → 2027-07-10 (-3d) | -138.02d → -136d |
| RHD4CZ8C014MV3200 | Joints Installation of Medium Voltage Cables 3Cx 500 mm² - (RD-C-1/4)-Z8-C014-MV | 2027-07-13 → 2027-07-11 (-2d) | 2027-07-15 → 2027-07-12 (-3d) | -138.02d → -136d |
| RHD4CZ8C014MV3300 | Testing of Medium Voltage Cables 3Cx 500 mm² - (RD-C-1/4)-Z8-C014-MV | 2027-07-15 → 2027-07-13 (-2d) | 2027-07-18 → 2027-07-14 (-4d) | -138.02d → -136d |
| RHD4CZ8C014MV3400 | Termination of Medium Voltage Cables 3Cx 500 mm² - (RD-C-1/4)-Z8-C014-MV | 2027-07-27 → 2027-07-25 (-2d) | 2027-07-29 → 2027-07-26 (-3d) | -146.02d → -144d |
| 7657 | **RHD4-02-002-C014-(MV)-Medium Voltage cables 3Cx 50 mm²** | 2027-07-06 → 2027-07-04 (-2d) | 2027-07-29 → 2027-07-26 (-3d) |  |
| RHD4CZ8C014MV3101 | Installation of Medium Voltage Cables 3Cx 50 mm² - (RD-C-1/4)-Z8-C014-MV | 2027-07-06 → 2027-07-04 (-2d) | 2027-07-08 → 2027-07-05 (-3d) | -146.02d → -144d |
| RHD4CZ8C014MV3301 | Testing of Medium Voltage Cables 3Cx 50 mm² - (RD-C-1/4)-Z8-C014-MV | 2027-07-12 → 2027-07-10 (-2d) | 2027-07-14 → 2027-07-11 (-3d) | -135.02d → -133d |
| RHD4CZ8C014MV3401 | Termination of Medium Voltage Cables 3Cx 50 mm² - (RD-C-1/4)-Z8-C014-MV | 2027-07-27 → 2027-07-25 (-2d) | 2027-07-29 → 2027-07-26 (-3d) | -146.02d → -144d |
| 7659 | **RHD4-02-002-C014-(MV)-Unit Substations** | 2027-07-12 → 2027-07-10 (-2d) | 2027-07-27 → 2027-07-24 (-3d) |  |
| RHD4CZ8C014MV5100 | Excavation for Unit Substations for Medium Voltage Network - (RD-C-1/4)-Z8-C014-MV | 2027-07-12 → 2027-07-10 (-2d) | 2027-07-14 → 2027-07-11 (-3d) | -146.02d → -144d |
| RHD4CZ8C014MV5200 | Concrete Base Placement for Unit Substations for Medium Voltage Network - (RD-C-1/4)-Z8-C014-MV | 2027-07-14 → 2027-07-12 (-2d) | 2027-07-17 → 2027-07-13 (-4d) | -146.02d → -144d |
| RHD4CZ8C014MV5300 | Installation for Fences and doors for Medium Voltage Network - (RD-C-1/4)-Z8-C014-MV | 2027-07-17 → 2027-07-14 (-3d) | 2027-07-22 → 2027-07-19 (-3d) | -146.02d → -144d |
| RHD4CZ8C014MV5400 | Installation for Unit Substations for Medium Voltage Network - (RD-C-1/4)-Z8-C014-MV | 2027-07-22 → 2027-07-20 (-2d) | 2027-07-27 → 2027-07-24 (-3d) | -146.02d → -144d |
| 7660 | **RHD4-02-002-Z8-C014-Low Voltage Network - LV** | 2027-07-29 → 2027-07-27 (-2d) | 2027-08-15 → 2027-08-11 (-4d) |  |
| 7663 | **RHD4-02-002-C014-(LV)-Low Voltage cables** | 2027-07-29 → 2027-07-27 (-2d) | 2027-08-08 → 2027-08-04 (-4d) |  |
| RHD4CZ8C014LV3100 | Excavation for Low Voltage Cables for Low Voltage Network - (RD-C-1/4)-Z8-C014-LV | 2027-07-29 → 2027-07-27 (-2d) | 2027-08-01 → 2027-07-28 (-4d) | -146.02d → -144d |
| RHD4CZ8C014LV3200 | Cable Laying of Low Voltage Cables for Low Voltage Network - (RD-C-1/4)-Z8-C014-LV | 2027-08-01 → 2027-07-29 (-3d) | 2027-08-03 → 2027-07-31 (-3d) | -146.02d → -144d |
| RHD4CZ8C014LV3300 | Warning tape and Backfill for Low Voltage Cables for Low Voltage Network - (RD-C-1/4)-Z8-C014-LV | 2027-08-03 → 2027-08-01 (-2d) | 2027-08-05 → 2027-08-02 (-3d) | -146.02d → -144d |
| RHD4CZ8C014LV3400 | Testing of Low Voltage Cables for Low Voltage Network - (RD-C-1/4)-Z8-C014-LV | 2027-08-05 → 2027-08-03 (-2d) | 2027-08-08 → 2027-08-04 (-4d) | -146.02d → -144d |
| 7664 | **RHD4-02-002-C014-(LV)-Low Voltage Distribution Pillars** | 2027-08-08 → 2027-08-05 (-3d) | 2027-08-15 → 2027-08-11 (-4d) |  |
| RHD4CZ8C014LV4100 | Leveling for Distribution Pillars for Low Voltage Network - (RD-C-1/4)-Z8-C014-LV | 2027-08-08 → 2027-08-05 (-3d) | 2027-08-10 → 2027-08-07 (-3d) | -146.02d → -144d |
| RHD4CZ8C014LV4200 | Lean Concrete for Distribution Pillars for Low Voltage Network - (RD-C-1/4)-Z8-C014-LV | 2027-08-10 → 2027-08-08 (-2d) | 2027-08-12 → 2027-08-09 (-3d) | -146.02d → -144d |
| RHD4CZ8C014LV4300 | Installation of Distribution Pillars for Low Voltage Network - (RD-C-1/4)-Z8-C014-LV | 2027-08-12 → 2027-08-10 (-2d) | 2027-08-15 → 2027-08-11 (-4d) | -146.02d → -144d |
| 7666 | **RHD4-02-002-Z8-C014-Street Lighting Network - SL** | 2027-07-11 → 2027-07-10 (-1d) | 2027-10-06 → 2027-10-03 (-3d) |  |
| 7667 | **RHD4-02-002-C014-(SL)-Street Lighting duct banks** | 2027-07-11 → 2027-07-10 (-1d) | 2027-07-20 → 2027-07-18 (-2d) |  |
| RHD4CZ8C014SL2100 | Excavation of Duct Banks for Street Lighting Network - (RD-C-1/4)-Z8-C014-SL | 2027-07-11 → 2027-07-10 (-1d) | 2027-07-13 → 2027-07-11 (-2d) | -140.02d → -139d |
| RHD4CZ8C014SL2200 | Installation of Duct Banks for Street Lighting Network - (RD-C-1/4)-Z8-C014-SL | 2027-07-13 → 2027-07-12 (-1d) | 2027-07-15 → 2027-07-13 (-2d) | -140.02d → -139d |
| RHD4CZ8C014SL2300 | Pouring of Duct Banks for Street Lighting Network - (RD-C-1/4)-Z8-C014-SL | 2027-07-15 → 2027-07-14 (-1d) | 2027-07-18 → 2027-07-15 (-3d) | -140.02d → -139d |
| RHD4CZ8C014SL2400 | Backfilling of Duct Banks for Street Lighting Network - (RD-C-1/4)-Z8-C014-SL | 2027-07-18 → 2027-07-17 (-1d) | 2027-07-20 → 2027-07-18 (-2d) | -140.02d → -139d |
| 7668 | **RHD4-02-002-C014-(SL)-Street Lighting Drawpit** | 2027-08-15 → 2027-08-12 (-3d) | 2027-08-19 → 2027-08-16 (-3d) |  |
| RHD4CZ8C014SL5100 | Excavation of Drawpit size 600x600x900mm for Street Lighting Network - (RD-C-1/4)-Z8-C014-SL | 2027-08-15 → 2027-08-12 (-3d) | 2027-08-17 → 2027-08-14 (-3d) | -146.02d → -144d |
| RHD4CZ8C014SL5200 | Installation of Drawpit size 600x600x900mm for Street Lighting Network - (RD-C-1/4)-Z8-C014-SL | 2027-08-17 → 2027-08-15 (-2d) | 2027-08-19 → 2027-08-16 (-3d) | -146.02d → -144d |
| 7669 | **RHD4-02-002-C014-(SL)-Street Lighting cables** | 2027-08-19 → 2027-08-17 (-2d) | 2027-09-05 → 2027-09-01 (-4d) |  |
| RHD4CZ8C014SL3100 | Excavation for Street Lighting Cables for Street Lighting Network - (RD-C-1/4)-Z8-C014-SL | 2027-08-19 → 2027-08-17 (-2d) | 2027-08-24 → 2027-08-21 (-3d) | -146.02d → -144d |
| RHD4CZ8C014SL3200 | Cable Laying of Street Lighting Cables for Street Lighting Network - (RD-C-1/4)-Z8-C014-SL | 2027-08-24 → 2027-08-22 (-2d) | 2027-08-29 → 2027-08-25 (-4d) | -146.02d → -144d |
| RHD4CZ8C014SL3300 | Warning tape and Backfill for Street Lighting Cables for Street Lighting Network - (RD-C-1/4)-Z8-C014-SL | 2027-08-29 → 2027-08-26 (-3d) | 2027-09-02 → 2027-08-30 (-3d) | -146.02d → -144d |
| RHD4CZ8C014SL3400 | Testing of Street Lighting Cables for Street Lighting Network - (RD-C-1/4)-Z8-C014-SL | 2027-09-02 → 2027-08-31 (-2d) | 2027-09-05 → 2027-09-01 (-4d) | -146.02d → -144d |
| 7670 | **RHD4-02-002-C014-(SL)-Street Lighting Poles** | 2027-09-05 → 2027-09-02 (-3d) | 2027-09-27 → 2027-09-22 (-5d) |  |
| RHD4CZ8C014SL1100 | Excavation for RC Base for Lighting Poles for Street Lighting Network - (RD-C-1/4)-Z8-C014-SL | 2027-09-05 → 2027-09-02 (-3d) | 2027-09-08 → 2027-09-05 (-3d) | -146.02d → -144d |
| RHD4CZ8C014SL1200 | Installation for RC Base for Lighting Poles for Street Lighting Network - (RD-C-1/4)-Z8-C014-SL | 2027-09-08 → 2027-09-06 (-2d) | 2027-09-12 → 2027-09-08 (-4d) | -146.02d → -144d |
| RHD4CZ8C014SL1300 | Backfill for RC Base for Lighting Poles for Street Lighting Network - (RD-C-1/4)-Z8-C014-SL | 2027-09-12 → 2027-09-09 (-3d) | 2027-09-15 → 2027-09-12 (-3d) | -146.02d → -144d |
| RHD4CZ8C014SL1400 | Installation for Lighting Poles for Street Lighting Network - (RD-C-1/4)-Z8-C014-SL | 2027-09-15 → 2027-09-13 (-2d) | 2027-09-20 → 2027-09-16 (-4d) | -146.02d → -144d |
| RHD4CZ8C014SL1500 | Luminaire Installation for Lighting Poles for Street Lighting Network - (RD-C-1/4)-Z8-C014-SL | 2027-09-20 → 2027-09-18 (-2d) | 2027-09-27 → 2027-09-22 (-5d) | -146.02d → -144d |
| 7671 | **RHD4-02-002-C014-(SL)-Street Lighting Feeder Pillars** | 2027-09-27 → 2027-09-25 (-2d) | 2027-10-04 → 2027-09-30 (-4d) |  |
| RHD4CZ8C014SL4100 | Leveling for Distribution Pillars for Street Lighting Network - (RD-C-1/4)-Z8-C014-SL | 2027-09-27 → 2027-09-25 (-2d) | 2027-09-29 → 2027-09-26 (-3d) | -146.02d → -144d |
| RHD4CZ8C014SL4200 | Lean Concrete for Distribution Pillars for Street Lighting Network - (RD-C-1/4)-Z8-C014-SL | 2027-09-29 → 2027-09-27 (-2d) | 2027-10-02 → 2027-09-28 (-4d) | -146.02d → -144d |
| RHD4CZ8C014SL4300 | Installation of Distribution Pillars for Street Lighting Network - (RD-C-1/4)-Z8-C014-SL | 2027-10-02 → 2027-09-29 (-3d) | 2027-10-04 → 2027-09-30 (-4d) | -146.02d → -144d |
| 7672 | **RHD4-02-002-C014-(SL)-Street Lighting Earthing System** | 2027-10-04 → 2027-10-02 (-2d) | 2027-10-06 → 2027-10-03 (-3d) |  |
| RHD4CZ8C014SL6100 | Installation of Earthing for Lighting Poles and Fedder Pillers for Street Lighting Network - (RD-C-1/4)-Z8-C014-SL | 2027-10-04 → 2027-10-02 (-2d) | 2027-10-06 → 2027-10-03 (-3d) | -146.02d → -144d |
| 7678 | **RHD4-02-002-Z8-C014-Telecommunications Network - TC** | 2027-10-06 → 2027-10-04 (-2d) | 2027-12-01 → 2027-11-28 (-3d) |  |
| 7679 | **RHD4-02-002-C014-(TC)-Telecommunications Ducts** | 2027-10-06 → 2027-10-04 (-2d) | 2027-11-27 → 2027-11-23 (-4d) |  |
| RHD4CZ8C014TC2100 | Excavation of HDPE Ducts for Telecom Network - (RD-C-1/4)-Z8-C014-TC | 2027-10-06 → 2027-10-04 (-2d) | 2027-10-13 → 2027-10-10 (-3d) | -146.02d → -144d |
| RHD4CZ8C014TC2200 | Installation of HDPE Ducts for Telecom Network - (RD-C-1/4)-Z8-C014-TC | 2027-10-13 → 2027-10-11 (-2d) | 2027-10-24 → 2027-10-20 (-4d) | -146.02d → -144d |
| RHD4CZ8C014TC2400 | Backfilling of HDPE Ducts for Telecom Network - (RD-C-1/4)-Z8-C014-TC | 2027-11-20 → 2027-11-17 (-3d) | 2027-11-27 → 2027-11-23 (-4d) | -169.02d → -167d |
| 7680 | **RHD4-02-002-C014-(TC)-Telecommunications Manholes** | 2027-11-27 → 2027-11-24 (-3d) | 2027-12-01 → 2027-11-28 (-3d) |  |
| RHD4CZ8C014TC5100 | Excavation for Manholes for Telecom Network - (RD-C-1/4)-Z8-C014-TC | 2027-11-27 → 2027-11-24 (-3d) | 2027-11-29 → 2027-11-25 (-4d) | -169.02d → -167d |
| RHD4CZ8C014TC5200 | Installation of Manholes for Telecom Network - (RD-C-1/4)-Z8-C014-TC | 2027-11-29 → 2027-11-27 (-2d) | 2027-12-01 → 2027-11-28 (-3d) | -169.02d → -167d |

| ID | Task | Start | Finish | Total float |
| --- | --- | --- | --- | --- |
| 7682 | **RHD4-02-002-Z8-C014-Information and Communication Technologies - ICT** | 2027-12-01 → 2027-11-29 (-2d) | 2028-01-18 → 2028-01-15 (-3d) |  |
| 7683 | **RHD4-02-002-C014-(ICT)-Information and Communication Technologies Ducts** | 2027-12-01 → 2027-11-29 (-2d) | 2028-01-11 → 2028-01-08 (-3d) |  |
| RHD4CZ8C014ICT2100 | Excavation of HDPE Ducts for ICT Network - (RD-C-1/4)-Z8-C014-ICT | 2027-12-01 → 2027-11-29 (-2d) | 2027-12-13 → 2027-12-09 (-4d) | -169.02d → -167d |
| RHD4CZ8C014ICT2200 | Installation of HDPE Ducts for ICT Network - (RD-C-1/4)-Z8-C014-ICT | 2027-12-13 → 2027-12-11 (-2d) | 2027-12-30 → 2027-12-27 (-3d) | -169.02d → -167d |
| RHD4CZ8C014ICT2400 | Backfilling of HDPE Ducts for ICT Network - (RD-C-1/4)-Z8-C014-ICT | 2027-12-30 → 2027-12-28 (-2d) | 2028-01-11 → 2028-01-08 (-3d) | -169.02d → -167d |
| 7684 | **RHD4-02-002-C014-(ICT)-Information and Communication Technologies Manholes** | 2028-01-11 → 2028-01-09 (-2d) | 2028-01-18 → 2028-01-15 (-3d) |  |
| RHD4CZ8C014ICT5100 | Excavation for Manholes for ICT Network - (RD-C-1/4)-Z8-C014-ICT | 2028-01-11 → 2028-01-09 (-2d) | 2028-01-15 → 2028-01-11 (-4d) | -169.02d → -167d |
| RHD4CZ8C014ICT5200 | Installation of Manholes for ICT Network - (RD-C-1/4)-Z8-C014-ICT | 2028-01-15 → 2028-01-12 (-3d) | 2028-01-18 → 2028-01-15 (-3d) | -169.02d → -167d |
| 8459 | **RHD4-02-002-Z9** |  | 2028-08-28 → 2028-08-20 (-8d) |  |
| 8649 | **RHD4-02-002-Z9-C071** |  | 2028-08-28 → 2028-08-20 (-8d) |  |
| 8828 | **RHD4-02-002-Z9-C071-Road Works - RD** | 2027-03-21 → 2027-03-13 (-8d) | 2028-08-28 → 2028-08-20 (-8d) |  |
| 8829 | **RHD4-02-002-C071-(RD)-Subgrade** | 2027-03-21 → 2027-03-13 (-8d) | 2027-04-04 → 2027-03-27 (-8d) |  |
| RHD4CZ9C071RD1100 | Supply, lay and compaction subgrade compacted thickness 300 mm for Roads - (RD-C-7/1)-Z9-C071-RD | 2027-03-21 → 2027-03-13 (-8d) | 2027-04-04 → 2027-03-27 (-8d) | -196d → -189d |
| 8830 | **RHD4-02-002-C071-(RD)-Aggregate Base Course** | 2027-04-05 → 2027-03-28 (-8d) | 2027-04-15 → 2027-04-07 (-8d) |  |
| RHD4CZ9C071RD2100 | Supply, lay and compaction Aggregate base course compacted thickness 300 mmfor Roads - (RD-C-7/1)-Z9-C071-RD | 2027-04-05 → 2027-03-28 (-8d) | 2027-04-15 → 2027-04-07 (-8d) | -196d → -189d |
| 8831 | **RHD4-02-002-C071-(RD)-Bituminous base course Two Layers, including (MC1)&(RC2)** | 2027-04-17 → 2027-04-08 (-9d) | 2028-08-06 → 2028-07-29 (-8d) |  |
| RHD4CZ9C071RD3100 | Supply, lay and Asphaltic base course including Prime Coat (MC1) for 1st Layer - (RD-C-7/1)-Z9-C071-RD | 2027-04-17 → 2027-04-08 (-9d) | 2027-04-20 → 2027-04-12 (-8d) | -196d → -189d |
| RHD4CZ9C071RD3200 | Supply, lay and Asphaltic base course including Tack Coat (RC2) for 2nd Layer - (RD-C-7/1)-Z9-C071-RD | 2028-08-02 → 2028-07-25 (-8d) | 2028-08-06 → 2028-07-29 (-8d) | -173d → -166d |
| 8833 | **RHD4-02-002-C071-(RD)-Precast Concrete Curb** | 2028-08-07 → 2028-07-30 (-8d) | 2028-08-14 → 2028-08-06 (-8d) |  |
| RHD4CZ9C071RD5100 | Supply and installation Precast Concrete Kerb for Roads - (RD-C-7/1)-Z9-C071-RD | 2028-08-07 → 2028-07-30 (-8d) | 2028-08-14 → 2028-08-06 (-8d) | -173d → -166d |
| 8836 | **RHD4-02-002-C071-(RD)-Traffic Signage** | 2028-08-15 → 2028-08-07 (-8d) | 2028-08-22 → 2028-08-14 (-8d) |  |
| RHD4CZ9C071RD8100 | Installation of Traffic Signage for Road Network - (RD-C-7/1)-Z9-C071-RD | 2028-08-15 → 2028-08-07 (-8d) | 2028-08-22 → 2028-08-14 (-8d) | -173d → -166d |
| 8832 | **RHD4-02-002-C071-(RD)-Bituminous concrete wearing course including tack coat (RC2)** | 2028-08-23 → 2028-08-15 (-8d) | 2028-08-24 → 2028-08-16 (-8d) |  |
| RHD4CZ9C071RD4100 | Supply, lay and compaction Asphaltic wearing course including tack Coat (RC2)for Road Network - (RD-C-7/1)-Z9-C071-RD | 2028-08-23 → 2028-08-15 (-8d) | 2028-08-24 → 2028-08-16 (-8d) | -173d → -166d |
| 8835 | **RHD4-02-002-C071-(RD)-Pavement Marking** | 2028-08-26 → 2028-08-17 (-9d) | 2028-08-28 → 2028-08-20 (-8d) |  |
| RHD4CZ9C071RD7100 | Pavement Markings for Road Network - (RD-C-7/1)-Z9-C071-RD | 2028-08-26 → 2028-08-17 (-9d) | 2028-08-28 → 2028-08-20 (-8d) | -173d → -166d |
| 8653 | **RHD4-02-002-Z9-C071-Storm Network - ST** |  | 2027-03-31 → 2027-03-27 (-4d) |  |
| 8672 | **RHD4-02-002-C071-(ST)-MH Works - 2000 mm diameter** |  | 2027-03-31 → 2027-03-27 (-4d) |  |
| RHD4CZ9C071ST3302 | MH Ring and C.Slab works and Backfilling works for MH 2000 mm - (RD-C-7/1)-Z9-C071-ST | 2027-03-14 → 2027-03-07 (-7d) | 2027-03-21 → 2027-03-16 (-5d) | -83.02d → -80d |
| RHD4CZ9C071ST3402 | Steel Cover for MH 2000 mm - (RD-C-7/1)-Z9-C071-ST | 2027-03-21 → 2027-03-17 (-4d) | 2027-03-25 → 2027-03-21 (-4d) | -83.02d → -80d |
| RHD4CZ9C071ST3502 | Finishing, Benching, Testing works for MH 2000 mm - (RD-C-7/1)-Z9-C071-ST | 2027-03-25 → 2027-03-22 (-3d) | 2027-03-31 → 2027-03-27 (-4d) | -83.02d → -80d |
| 8670 | **RHD4-02-002-C071-(ST)-MH Works - 1200 mm diameter** |  | 2027-03-29 → 2027-03-24 (-5d) |  |
| RHD4CZ9C071ST3300 | MH Ring and C.Slab works and Backfilling works for MH 1200 mm - (RD-C-7/1)-Z9-C071-ST | 2027-03-14 → 2027-03-07 (-7d) | 2027-03-20 → 2027-03-15 (-5d) | -111.02d → -108d |
| RHD4CZ9C071ST3400 | Steel Cover for MH 1200 mm - (RD-C-7/1)-Z9-C071-ST | 2027-03-20 → 2027-03-16 (-4d) | 2027-03-24 → 2027-03-20 (-4d) | -78.02d → -75d |
| RHD4CZ9C071ST3500 | Finishing, Benching, Testing works for MH 1200 mm - (RD-C-7/1)-Z9-C071-ST | 2027-03-24 → 2027-03-21 (-3d) | 2027-03-29 → 2027-03-24 (-5d) | -78.02d → -75d |
| 8671 | **RHD4-02-002-C071-(ST)-MH Works - 1500 mm diameter** |  | 2027-03-25 → 2027-03-21 (-4d) |  |
| RHD4CZ9C071ST3301 | MH Ring and C.Slab works and Backfilling works for MH 1500 mm - (RD-C-7/1)-Z9-C071-ST | 2027-03-14 → 2027-03-07 (-7d) | 2027-03-18 → 2027-03-14 (-4d) | -110.02d → -107d |
| RHD4CZ9C071ST3401 | Steel Cover for MH 1500 mm - (RD-C-7/1)-Z9-C071-ST | 2027-03-18 → 2027-03-15 (-3d) | 2027-03-21 → 2027-03-16 (-5d) | -81.02d → -78d |
| RHD4CZ9C071ST3501 | Finishing, Benching, Testing works for MH 1500 mm - (RD-C-7/1)-Z9-C071-ST | 2027-03-21 → 2027-03-17 (-4d) | 2027-03-25 → 2027-03-21 (-4d) | -81.02d → -78d |
| 8661 | **RHD4-02-002-C071-(ST)-GRP Pipes - 1100 mm diameter** |  | 2027-03-18 → 2027-03-14 (-4d) |  |
| RHD4CZ9C071ST1307 | Installing for GRP Pipe Line 1100 mm - (RD-C-7/1)-Z9-C071-ST | 2027-03-08 → 2027-03-04 (-4d) | 2027-03-14 → 2027-03-06 (-8d) | -146.02d → -143d |
| RHD4CZ9C071ST1407 | Primary Test for GRP Pipe Line 1100 mm - (RD-C-7/1)-Z9-C071-ST | 2027-03-14 → 2027-03-07 (-7d) | 2027-03-16 → 2027-03-08 (-8d) | -146.02d → -143d |
| RHD4CZ9C071ST1507 | Backfilling and warning tape works for GRP Pipe Line 1100 mm - (RD-C-7/1)-Z9-C071-ST | 2027-03-16 → 2027-03-13 (-3d) | 2027-03-18 → 2027-03-14 (-4d) | -146.02d → -143d |
| 8660 | **RHD4-02-002-C071-(ST)-GRP Pipes - 1000 mm diameter** |  | 2027-03-16 → 2027-03-08 (-8d) |  |
| RHD4CZ9C071ST1406 | Primary Test for GRP Pipe Line 1000 mm - (RD-C-7/1)-Z9-C071-ST | 2027-03-14 → 2027-03-07 (-7d) | 2027-03-16 → 2027-03-08 (-8d) | -144.02d → -141d |
| 8659 | **RHD4-02-002-C071-(ST)-GRP Pipes - 900 mm diameter** |  | 2027-03-16 → 2027-03-08 (-8d) |  |
| RHD4CZ9C071ST1405 | Primary Test for GRP Pipe Line 900 mm - (RD-C-7/1)-Z9-C071-ST | 2027-03-14 → 2027-03-07 (-7d) | 2027-03-16 → 2027-03-08 (-8d) | -144.02d → -141d |
| 8656 | **RHD4-02-002-C071-(ST)-GRP Pipes - 600 mm diameter** |  | 2027-03-16 → 2027-03-08 (-8d) |  |
| RHD4CZ9C071ST1402 | Primary Test for GRP Pipe Line 600 mm - (RD-C-7/1)-Z9-C071-ST | 2027-03-14 → 2027-03-07 (-7d) | 2027-03-16 → 2027-03-08 (-8d) | -134.02d → -131d |
| 8655 | **RHD4-02-002-C071-(ST)-GRP Pipes - 500 mm diameter** |  | 2027-03-14 → 2027-03-06 (-8d) |  |
| RHD4CZ9C071ST1401 | Primary Test for GRP Pipe Line 500 mm - (RD-C-7/1)-Z9-C071-ST | 2027-03-08 → 2027-03-04 (-4d) | 2027-03-14 → 2027-03-06 (-8d) | -137.02d → -132d |
| 8654 | **RHD4-02-002-C071-(ST)-GRP Pipes - 400 mm diameter** |  | 2027-03-14 → 2027-03-06 (-8d) |  |
| RHD4CZ9C071ST1400 | Primary Test for GRP Pipe Line 400 mm - (RD-C-7/1)-Z9-C071-ST | 2027-03-08 → 2027-03-04 (-4d) | 2027-03-14 → 2027-03-06 (-8d) | -129.02d → -126d |
| 8668 | **RHD4-02-002-C071-(ST)-UPVC Pipes - 300 mm diameter** |  | 2027-03-25 → 2027-03-21 (-4d) |  |
| RHD4CZ9C071ST2100 | Excavation works for UPVC Pipe Line 300 mm - (RD-C-7/1)-Z9-C071-ST |  | 2027-03-14 → 2027-03-06 (-8d) | -133.02d → -130d |
| RHD4CZ9C071ST2200 | Bedding works for UPVC Pipe Line 300 mm - (RD-C-7/1)-Z9-C071-ST |  | 2027-03-16 → 2027-03-08 (-8d) | -133.02d → -130d |
| RHD4CZ9C071ST2300 | Installing for UPVC Pipe Line 300 mm - (RD-C-7/1)-Z9-C071-ST |  | 2027-03-18 → 2027-03-14 (-4d) | -133.02d → -130d |
| RHD4CZ9C071ST2500 | Backfilling and warning tape works for UPVC Pipe Line 300 mm - (RD-C-7/1)-Z9-C071-ST |  | 2027-03-25 → 2027-03-21 (-4d) | -91.02d → -88d |
| RHD4CZ9C071ST2400 | Primary Test for UPVC Pipe Line 300 mm - (RD-C-7/1)-Z9-C071-ST | 2027-03-18 → 2027-03-15 (-3d) | 2027-03-23 → 2027-03-18 (-5d) | -91.02d → -88d |
| 8676 | **RHD4-02-002-C071-(ST)-Concrete Encasement** | 2027-03-16 → 2027-03-13 (-3d) | 2027-03-18 → 2027-03-14 (-4d) |  |
| RHD4CZ9C071ST6100 | Pipe Encasement for Storm Pipelines - (RD-C-7/1)-Z9-C071-ST | 2027-03-16 → 2027-03-13 (-3d) | 2027-03-18 → 2027-03-14 (-4d) | -133.02d → -130d |
| 8677 | **RHD4-02-002-Z9-C071-Catch Basin - ST** |  | 2027-05-03 → 2027-04-28 (-5d) |  |
| 8678 | **RHD4-02-002-C071-(ST)-Single Catch Basin Works** |  | 2027-05-03 → 2027-04-28 (-5d) |  |
| RHD4CZ9C071ST7100 | Excavation works for Single Catch Basin - (RD-C-7/1)-Z9-C071-ST |  | 2027-03-23 → 2027-03-18 (-5d) | -111.02d → -108d |
| RHD4CZ9C071ST7200 | PC Blinding, Installation and Pipe connection for Single Catch Basin - (RD-C-7/1)-Z9-C071-ST |  | 2027-03-31 → 2027-03-27 (-4d) | -111.02d → -108d |
| RHD4CZ9C071ST7300 | Rings & C.Slab & Final Backfill for Single Catch Basin - (RD-C-7/1)-Z9-C071-ST |  | 2027-04-10 → 2027-04-05 (-5d) | -111.02d → -108d |
| RHD4CZ9C071ST7400 | Steel Cover for Single Catch Basin - (RD-C-7/1)-Z9-C071-ST | 2027-04-10 → 2027-04-06 (-4d) | 2027-04-18 → 2027-04-13 (-5d) | -111.02d → -108d |
| RHD4CZ9C071ST7500 | Finishing and Insulation works for Single Catch Basin - (RD-C-7/1)-Z9-C071-ST | 2027-04-18 → 2027-04-14 (-4d) | 2027-05-03 → 2027-04-28 (-5d) | -69.02d → -66d |
| 8702 | **RHD4-02-002-Z9-C071-Sewage Network - SW** |  | 2027-06-12 → 2027-06-07 (-5d) |  |
| 1895 | **RHD4-02-002-C071-(SW)-GRP Pipes - 500 mm diameter** |  | 2027-05-11 → 2027-05-06 (-5d) |  |

| ID | Task | Start | Finish | Total float |
| --- | --- | --- | --- | --- |
| RHD4CZ9C071SW1102 | Excavation works for GRP Pipe Line 500 mm - (RD-C-7/1)-Z9-C071-SW |  | 2027-04-22 → 2027-04-18 (-4d) | -111.02d → -108d |
| RHD4CZ9C071SW1202 | Bedding works for GRP Pipe Line 500 mm - (RD-C-7/1)-Z9-C071-SW | 2027-04-22 → 2027-04-19 (-3d) | 2027-04-27 → 2027-04-22 (-5d) | -111.02d → -108d |
| RHD4CZ9C071SW1302 | Installing for GRP Pipe Line 500 mm - (RD-C-7/1)-Z9-C071-SW | 2027-04-27 → 2027-04-24 (-3d) | 2027-05-02 → 2027-04-27 (-5d) | -111.02d → -108d |
| RHD4CZ9C071SW1402 | Primary Test for GRP Pipe Line 500 mm - (RD-C-7/1)-Z9-C071-SW | 2027-05-02 → 2027-04-28 (-4d) | 2027-05-06 → 2027-05-02 (-4d) | -111.02d → -108d |
| RHD4CZ9C071SW1502 | Backfilling and warning tape works for GRP Pipe Line 500 mm - (RD-C-7/1)-Z9-C071-SW | 2027-05-06 → 2027-05-03 (-3d) | 2027-05-11 → 2027-05-06 (-5d) | -111.02d → -108d |
| 3794 | **RHD4-02-002-C071-(SW)-MH Works - 1200 mm diameter** | 2027-04-22 → 2027-04-19 (-3d) | 2027-06-12 → 2027-06-07 (-5d) |  |
| RHD4CZ9C071SW3100 | Excavation and PC Blinding works for MH 1200 mm - (RD-C-7/1)-Z9-C071-SW | 2027-04-22 → 2027-04-19 (-3d) | 2027-04-28 → 2027-04-24 (-4d) | -110.02d → -107d |
| RHD4CZ9C071SW3200 | Installation of Base for MH 1200 mm - (RD-C-7/1)-Z9-C071-SW | 2027-04-28 → 2027-04-25 (-3d) | 2027-05-10 → 2027-05-05 (-5d) | -110.02d → -107d |
| RHD4CZ9C071SW3300 | MH Ring and C.Slab works and Backfilling works for MH 1200 mm - (RD-C-7/1)-Z9-C071-SW | 2027-05-10 → 2027-05-06 (-4d) | 2027-05-26 → 2027-05-22 (-4d) | -110.02d → -107d |
| RHD4CZ9C071SW3400 | Steel Cover for MH 1200 mm - (RD-C-7/1)-Z9-C071-SW | 2027-05-26 → 2027-05-23 (-3d) | 2027-05-31 → 2027-05-26 (-5d) | -110.02d → -107d |
| RHD4CZ9C071SW3500 | Finishing, Benching, Testing works for MH 1200 mm - (RD-C-7/1)-Z9-C071-SW | 2027-05-31 → 2027-05-27 (-4d) | 2027-06-12 → 2027-06-07 (-5d) | -110.02d → -107d |
| 8739 | **RHD4-02-002-Z9-C071-Potable Network - PT** | 2027-05-11 → 2027-05-08 (-3d) | 2027-06-09 → 2027-06-05 (-4d) |  |
| 8742 | **RHD4-02-002-C071-(PT)-HDPE Pipes - 200 mm diameter** | 2027-05-11 → 2027-05-08 (-3d) | 2027-05-29 → 2027-05-24 (-5d) |  |
| RHD4CZ9C071PT1102 | Excavation works for HDPE Pipline 200 mm - (RD-C-7/1)-Z9-C071-PT | 2027-05-11 → 2027-05-08 (-3d) | 2027-05-13 → 2027-05-09 (-4d) | -111.02d → -108d |
| RHD4CZ9C071PT1202 | Bedding works for HDPE Pipline 200 mm - (RD-C-7/1)-Z9-C071-PT | 2027-05-13 → 2027-05-10 (-3d) | 2027-05-20 → 2027-05-11 (-9d) | -109.02d → -106d |
| RHD4CZ9C071PT1302 | Installing for HDPE Pipline 200 mm - (RD-C-7/1)-Z9-C071-PT | 2027-05-20 → 2027-05-12 (-8d) | 2027-05-24 → 2027-05-19 (-5d) | -109.02d → -106d |
| RHD4CZ9C071PT1402 | Primary Test for HDPE Pipline 200 mm - (RD-C-7/1)-Z9-C071-PT | 2027-05-24 → 2027-05-20 (-4d) | 2027-05-26 → 2027-05-22 (-4d) | -106.02d → -103d |
| RHD4CZ9C071PT1502 | Backfilling and warning tape works for HDPE Pipline 200 mm - (RD-C-7/1)-Z9-C071-PT | 2027-05-26 → 2027-05-23 (-3d) | 2027-05-29 → 2027-05-24 (-5d) | -106.02d → -103d |
| 8741 | **RHD4-02-002-C071-(PT)-HDPE Pipes - 160 mm diameter** | 2027-05-13 → 2027-05-10 (-3d) | 2027-06-07 → 2027-06-02 (-5d) |  |
| RHD4CZ9C071PT1101 | Excavation works for HDPE Pipline 160 mm - (RD-C-7/1)-Z9-C071-PT | 2027-05-13 → 2027-05-10 (-3d) | 2027-05-22 → 2027-05-12 (-10d) | -110.02d → -107d |
| RHD4CZ9C071PT1201 | Bedding works for HDPE Pipline 160 mm - (RD-C-7/1)-Z9-C071-PT | 2027-05-22 → 2027-05-13 (-9d) | 2027-05-25 → 2027-05-20 (-5d) | -110.02d → -107d |
| RHD4CZ9C071PT1301 | Installing for HDPE Pipline 160 mm - (RD-C-7/1)-Z9-C071-PT | 2027-05-25 → 2027-05-22 (-3d) | 2027-05-31 → 2027-05-26 (-5d) | -110.02d → -107d |
| RHD4CZ9C071PT1401 | Primary Test for HDPE Pipline 160 mm - (RD-C-7/1)-Z9-C071-PT | 2027-05-31 → 2027-05-27 (-4d) | 2027-06-02 → 2027-05-29 (-4d) | -110.02d → -107d |
| RHD4CZ9C071PT1501 | Backfilling and warning tape works for HDPE Pipline 160 mm - (RD-C-7/1)-Z9-C071-PT | 2027-06-02 → 2027-05-30 (-3d) | 2027-06-07 → 2027-06-02 (-5d) | -110.02d → -107d |
| 8745 | **RHD4-02-002-C071-(PT)-Gate Valves (Direct Buried)** | 2027-05-22 → 2027-05-13 (-9d) | 2027-06-09 → 2027-06-05 (-4d) |  |
| RHD4CZ9C071PT3100 | Installation for Direct Buried Gate Valves - (RD-C-7/1)-Z9-C071-PT | 2027-05-22 → 2027-05-13 (-9d) | 2027-05-24 → 2027-05-19 (-5d) | -106.02d → -103d |
| RHD4CZ9C071PT3200 | Stem and Service box for Direct Buried Gate Valves - (RD-C-7/1)-Z9-C071-PT | 2027-06-07 → 2027-06-03 (-4d) | 2027-06-09 → 2027-06-05 (-4d) | -110.02d → -107d |
| 8748 | **RHD4-02-002-C071-(PT)-Wash out Valve Chambers** | 2027-05-13 → 2027-05-10 (-3d) | 2027-05-27 → 2027-05-23 (-4d) |  |
| RHD4CZ9C071PT2101 | Excavation and Bedding for Wash out Valve Chambers for Potable Water Network - (RD-C-7/1)-Z9-C071-PT | 2027-05-13 → 2027-05-10 (-3d) | 2027-05-20 → 2027-05-11 (-9d) | -111.02d → -108d |
| RHD4CZ9C071PT2201 | PC works for Wash out Valve Chambers for Potable Water Network - (RD-C-7/1)-Z9-C071-PT | 2027-05-20 → 2027-05-12 (-8d) | 2027-05-23 → 2027-05-13 (-10d) | -102.02d → -99d |
| RHD4CZ9C071PT2301 | Installation for Wash out Valve Chambers for Potable Water Network - (RD-C-7/1)-Z9-C071-PT | 2027-05-23 → 2027-05-19 (-4d) | 2027-05-25 → 2027-05-20 (-5d) | -102.02d → -99d |
| RHD4CZ9C071PT2401 | Backfilling works for Wash out Valve Chambers for Potable Water Network - (RD-C-7/1)-Z9-C071-PT | 2027-05-25 → 2027-05-22 (-3d) | 2027-05-27 → 2027-05-23 (-4d) | -102.02d → -99d |
| 8749 | **RHD4-02-002-C071-(PT)-Wash out Valves** | 2027-05-25 → 2027-05-22 (-3d) | 2027-05-30 → 2027-05-25 (-5d) |  |
| RHD4CZ9C071PT3102 | Installation for Wash out Valves for Potable Water Network - (RD-C-7/1)-Z9-C071-PT | 2027-05-25 → 2027-05-22 (-3d) | 2027-05-27 → 2027-05-23 (-4d) | -102.02d → -99d |
| RHD4CZ9C071PT3202 | Stem and Service box for Wash out Valves for Potable Water Network - (RD-C-7/1)-Z9-C071-PT | 2027-05-27 → 2027-05-24 (-3d) | 2027-05-30 → 2027-05-25 (-5d) | -102.02d → -99d |
| 8750 | **RHD4-02-002-C071-(PT)-Air Valve Chambers** | 2027-05-20 → 2027-05-12 (-8d) | 2027-05-30 → 2027-05-25 (-5d) |  |
| RHD4CZ9C071PT2102 | Excavation and Bedding for Air Valve Chambers for Potable Water Network - (RD-C-7/1)-Z9-C071-PT | 2027-05-20 → 2027-05-12 (-8d) | 2027-05-23 → 2027-05-13 (-10d) | -111.02d → -108d |
| RHD4CZ9C071PT2202 | PC works for Air Valve Chambers for Potable Water Network - (RD-C-7/1)-Z9-C071-PT | 2027-05-23 → 2027-05-19 (-4d) | 2027-05-25 → 2027-05-20 (-5d) | -105.02d → -102d |
| RHD4CZ9C071PT2302 | Installation for Air Valve Chambers for Potable Water Network - (RD-C-7/1)-Z9-C071-PT | 2027-05-25 → 2027-05-22 (-3d) | 2027-05-27 → 2027-05-23 (-4d) | -105.02d → -102d |
| RHD4CZ9C071PT2402 | Backfilling works for Air Valve Chambers for Potable Water Network - (RD-C-7/1)-Z9-C071-PT | 2027-05-27 → 2027-05-24 (-3d) | 2027-05-30 → 2027-05-25 (-5d) | -105.02d → -102d |
| 8751 | **RHD4-02-002-C071-(PT)-Air Valves** | 2027-05-13 → 2027-05-10 (-3d) | 2027-05-23 → 2027-05-13 (-10d) |  |
| RHD4CZ9C071PT3103 | Installation for Air Valves for Potable Water Network - (RD-C-7/1)-Z9-C071-PT | 2027-05-13 → 2027-05-10 (-3d) | 2027-05-20 → 2027-05-11 (-9d) | -108.02d → -105d |
| RHD4CZ9C071PT3203 | Stem and Service box for Air Valves for Potable Water Network - (RD-C-7/1)-Z9-C071-PT | 2027-05-20 → 2027-05-12 (-8d) | 2027-05-23 → 2027-05-13 (-10d) | -108.02d → -105d |
| 8752 | **RHD4-02-002-C071-(PT)-Fire Hydrant** | 2027-05-23 → 2027-05-19 (-4d) | 2027-06-05 → 2027-05-31 (-5d) |  |
| RHD4CZ9C071PT4100 | Excavation and Bedding and Pipe Installation for Fire Hydrant - (RD-C-7/1)-Z9-C071-PT | 2027-05-23 → 2027-05-19 (-4d) | 2027-05-26 → 2027-05-22 (-4d) | -111.02d → -108d |
| RHD4CZ9C071PT4200 | Valve Installation for Fire Hydrant - (RD-C-7/1)-Z9-C071-PT | 2027-05-26 → 2027-05-23 (-3d) | 2027-05-29 → 2027-05-24 (-5d) | -111.02d → -108d |
| RHD4CZ9C071PT4300 | Stem for Fire Hydrant - (RD-C-7/1)-Z9-C071-PT | 2027-05-29 → 2027-05-25 (-4d) | 2027-05-31 → 2027-05-26 (-5d) | -111.02d → -108d |
| RHD4CZ9C071PT4400 | Fire Installation for Fire Hydrant - (RD-C-7/1)-Z9-C071-PT | 2027-05-31 → 2027-05-27 (-4d) | 2027-06-02 → 2027-05-29 (-4d) | -111.02d → -108d |
| RHD4CZ9C071PT4500 | Protection Barriers for Fire Hydrant - (RD-C-7/1)-Z9-C071-PT | 2027-06-02 → 2027-05-30 (-3d) | 2027-06-05 → 2027-05-31 (-5d) | -111.02d → -108d |
| 8754 | **RHD4-02-002-Z9-C071-Irrigation Network - IRR** | 2027-05-30 → 2027-05-26 (-4d) | 2027-06-23 → 2027-06-19 (-4d) |  |
| 8762 | **RHD4-02-002-C071-(IRR)-HDPE Pipes - 500 mm diameter** | 2027-05-30 → 2027-05-26 (-4d) | 2027-06-22 → 2027-06-17 (-5d) |  |
| RHD4CZ9C071IRR1107 | Excavation works for HDPE Pipline 500 mm - (RD-C-7/1)-Z9-C071-IRR | 2027-05-30 → 2027-05-26 (-4d) | 2027-06-05 → 2027-05-31 (-5d) | -105.02d → -102d |
| RHD4CZ9C071IRR1207 | Bedding works for HDPE Pipline 500 mm - (RD-C-7/1)-Z9-C071-IRR | 2027-06-05 → 2027-06-01 (-4d) | 2027-06-09 → 2027-06-05 (-4d) | -105.02d → -102d |
| RHD4CZ9C071IRR1307 | Installing for HDPE Pipline 500 mm - (RD-C-7/1)-Z9-C071-IRR | 2027-06-09 → 2027-06-06 (-3d) | 2027-06-15 → 2027-06-10 (-5d) | -105.02d → -102d |
| RHD4CZ9C071IRR1407 | Primary Test for HDPE Pipline 500 mm - (RD-C-7/1)-Z9-C071-IRR | 2027-06-15 → 2027-06-12 (-3d) | 2027-06-17 → 2027-06-13 (-4d) | -105.02d → -102d |
| RHD4CZ9C071IRR1507 | Backfilling and warning tape works for HDPE Pipline 500 mm - (RD-C-7/1)-Z9-C071-IRR | 2027-06-17 → 2027-06-14 (-3d) | 2027-06-22 → 2027-06-17 (-5d) | -105.02d → -102d |
| 8755 | **RHD4-02-002-C071-(IRR)-HDPE Pipes - 160 mm diameter** | 2027-06-05 → 2027-06-01 (-4d) | 2027-06-23 → 2027-06-19 (-4d) |  |
| RHD4CZ9C071IRR1100 | Excavation works for HDPE Pipline 160 mm - (RD-C-7/1)-Z9-C071-IRR | 2027-06-05 → 2027-06-01 (-4d) | 2027-06-09 → 2027-06-05 (-4d) | -105.02d → -102d |
| RHD4CZ9C071IRR1200 | Bedding works for HDPE Pipline 160 mm - (RD-C-7/1)-Z9-C071-IRR | 2027-06-09 → 2027-06-06 (-3d) | 2027-06-13 → 2027-06-08 (-5d) | -105.02d → -102d |
| RHD4CZ9C071IRR1300 | Installing for HDPE Pipline 160 mm - (RD-C-7/1)-Z9-C071-IRR | 2027-06-13 → 2027-06-09 (-4d) | 2027-06-17 → 2027-06-13 (-4d) | -105.02d → -102d |
| RHD4CZ9C071IRR1400 | Primary Test for HDPE Pipline 160 mm - (RD-C-7/1)-Z9-C071-IRR | 2027-06-17 → 2027-06-14 (-3d) | 2027-06-20 → 2027-06-15 (-5d) | -104.02d → -101d |
| RHD4CZ9C071IRR1500 | Backfilling and warning tape works for HDPE Pipline 160 mm - (RD-C-7/1)-Z9-C071-IRR | 2027-06-20 → 2027-06-16 (-4d) | 2027-06-23 → 2027-06-19 (-4d) | -104.02d → -101d |
| 6116 | **RHD4-02-002-C071-(IRR)-Butterfly Valve Chamber** | 2027-06-09 → 2027-06-06 (-3d) | 2027-06-19 → 2027-06-14 (-5d) |  |
| RHD4CZ9C071IRR2100 | Excavation and Bedding for Butterfly Valve Chamber for Irrigation Network - (RD-C-7/1)-Z9-C071-IRR | 2027-06-09 → 2027-06-06 (-3d) | 2027-06-12 → 2027-06-07 (-5d) | -104.02d → -101d |
| RHD4CZ9C071IRR2200 | PC works for Butterfly Valve Chamber for Irrigation Network - (RD-C-7/1)-Z9-C071-IRR | 2027-06-12 → 2027-06-08 (-4d) | 2027-06-14 → 2027-06-09 (-5d) | -104.02d → -101d |
| RHD4CZ9C071IRR2300 | Installation for Butterfly Valve Chamber for Irrigation Network - (RD-C-7/1)-Z9-C071-IRR | 2027-06-14 → 2027-06-10 (-4d) | 2027-06-16 → 2027-06-12 (-4d) | -104.02d → -101d |
| RHD4CZ9C071IRR2400 | Backfilling works for Butterfly Valve Chamber for Irrigation Network - (RD-C-7/1)-Z9-C071-IRR | 2027-06-16 → 2027-06-13 (-3d) | 2027-06-19 → 2027-06-14 (-5d) | -104.02d → -101d |
| 6117 | **RHD4-02-002-C071-(IRR)-Butterfly Valves** | 2027-06-17 → 2027-06-14 (-3d) | 2027-06-22 → 2027-06-17 (-5d) |  |
| RHD4CZ9C071IRR3101 | Installation for Butterfly Valves for Irrigation Network - (RD-C-7/1)-Z9-C071-IRR | 2027-06-17 → 2027-06-14 (-3d) | 2027-06-20 → 2027-06-15 (-5d) | -105.02d → -102d |
| RHD4CZ9C071IRR3201 | Stem and Service box for Butterfly Valves for Irrigation Network - (RD-C-7/1)-Z9-C071-IRR | 2027-06-20 → 2027-06-16 (-4d) | 2027-06-22 → 2027-06-17 (-5d) | -105.02d → -102d |

| ID | Task | Start | Finish | Total float |
| --- | --- | --- | --- | --- |
| 8788 | **RHD4-02-002-Z9-C071-Medium Voltage Network - MV** | 2027-04-21 → 2027-04-13 (-8d) | 2027-06-12 → 2027-06-03 (-9d) |  |
| 8789 | **RHD4-02-002-C071-(MV)-Medium Voltage cable trench** | 2027-04-21 → 2027-04-13 (-8d) | 2027-06-12 → 2027-06-03 (-9d) |  |
| RHD4CZ9C071MV1100 | Excavation for Medium Voltage Trench - (RD-C-7/1)-Z9-C071-MV | 2027-04-21 → 2027-04-13 (-8d) | 2027-05-01 → 2027-04-22 (-9d) | -196d → -189d |
| RHD4CZ9C071MV1200 | Trench Backfilling for Medium Voltage Network - (RD-C-7/1)-Z9-C071-MV | 2027-06-02 → 2027-05-25 (-8d) | 2027-06-12 → 2027-06-03 (-9d) | -196d → -189d |
| 8790 | **RHD4-02-002-C071-(MV)-Medium Voltage duct banks** | 2027-05-02 → 2027-04-24 (-8d) | 2027-05-25 → 2027-05-12 (-13d) |  |
| RHD4CZ9C071MV2100 | Excavation of Duct Banks for Medium Voltage Network - (RD-C-7/1)-Z9-C071-MV | 2027-05-02 → 2027-04-24 (-8d) | 2027-05-05 → 2027-04-27 (-8d) | -195d → -188d |
| RHD4CZ9C071MV2200 | Installation of Duct Banks for Medium Voltage Network - (RD-C-7/1)-Z9-C071-MV | 2027-05-06 → 2027-04-28 (-8d) | 2027-05-12 → 2027-05-04 (-8d) | -195d → -188d |
| RHD4CZ9C071MV2300 | Pouring of Duct Banks for Medium Voltage Network - (RD-C-7/1)-Z9-C071-MV | 2027-05-13 → 2027-05-05 (-8d) | 2027-05-22 → 2027-05-09 (-13d) | -195d → -188d |
| RHD4CZ9C071MV2400 | Backfilling of Duct Banks for Medium Voltage Network - (RD-C-7/1)-Z9-C071-MV | 2027-05-23 → 2027-05-10 (-13d) | 2027-05-25 → 2027-05-12 (-13d) | -195d → -188d |
| 8791 | **RHD4-02-002-C071-(MV)-Medium Voltage cables 3Cx 500 mm²** | 2027-05-02 → 2027-04-24 (-8d) | 2027-06-01 → 2027-05-24 (-8d) |  |
| RHD4CZ9C071MV3100 | Installation of Medium Voltage Cables 3Cx 500 mm² - (RD-C-7/1)-Z9-C071-MV | 2027-05-02 → 2027-04-24 (-8d) | 2027-05-23 → 2027-05-10 (-13d) | -196d → -189d |
| RHD4CZ9C071MV3200 | Joints Installation of Medium Voltage Cables 3Cx 500 mm² - (RD-C-7/1)-Z9-C071-MV | 2027-05-24 → 2027-05-11 (-13d) | 2027-05-26 → 2027-05-13 (-13d) | -196d → -189d |
| RHD4CZ9C071MV3300 | Testing of Medium Voltage Cables 3Cx 500 mm² - (RD-C-7/1)-Z9-C071-MV | 2027-05-27 → 2027-05-19 (-8d) | 2027-06-01 → 2027-05-24 (-8d) | -196d → -189d |
| 8795 | **RHD4-02-002-Z9-C071-Low Voltage Network - LV** | 2027-06-05 → 2027-06-01 (-4d) | 2027-07-15 → 2027-07-11 (-4d) |  |
| 8796 | **RHD4-02-002-C071-(LV)-Low Voltage duct banks** | 2027-06-05 → 2027-06-01 (-4d) | 2027-06-14 → 2027-06-09 (-5d) |  |
| RHD4CZ9C071LV2100 | Excavation of Duct Banks for Low Voltage Network - (RD-C-7/1)-Z9-C071-LV | 2027-06-05 → 2027-06-01 (-4d) | 2027-06-07 → 2027-06-02 (-5d) | -111.02d → -108d |
| RHD4CZ9C071LV2200 | Installation of Duct Banks for Low Voltage Network - (RD-C-7/1)-Z9-C071-LV | 2027-06-07 → 2027-06-03 (-4d) | 2027-06-09 → 2027-06-05 (-4d) | -111.02d → -108d |
| RHD4CZ9C071LV2300 | Pouring of Duct Banks for Low Voltage Network - (RD-C-7/1)-Z9-C071-LV | 2027-06-09 → 2027-06-06 (-3d) | 2027-06-12 → 2027-06-07 (-5d) | -111.02d → -108d |
| RHD4CZ9C071LV2400 | Backfilling of Duct Banks for Low Voltage Network - (RD-C-7/1)-Z9-C071-LV | 2027-06-12 → 2027-06-08 (-4d) | 2027-06-14 → 2027-06-09 (-5d) | -111.02d → -108d |
| 8797 | **RHD4-02-002-C071-(LV)-Low Voltage Drawpit** | 2027-06-14 → 2027-06-10 (-4d) | 2027-06-19 → 2027-06-14 (-5d) |  |
| RHD4CZ9C071LV5100 | Excavation of Drawpit size 900x900x1000mm for Low Voltage Network - (RD-C-7/1)-Z9-C071-LV | 2027-06-14 → 2027-06-10 (-4d) | 2027-06-16 → 2027-06-12 (-4d) | -111.02d → -108d |
| RHD4CZ9C071LV5200 | Installation of Drawpit size 900x900x1000mm for Low Voltage Network - (RD-C-7/1)-Z9-C071-LV | 2027-06-16 → 2027-06-13 (-3d) | 2027-06-19 → 2027-06-14 (-5d) | -111.02d → -108d |
| 8798 | **RHD4-02-002-C071-(LV)-Low Voltage cables** | 2027-06-19 → 2027-06-15 (-4d) | 2027-07-15 → 2027-07-11 (-4d) |  |
| RHD4CZ9C071LV3100 | Excavation for Low Voltage Cables for Low Voltage Network - (RD-C-7/1)-Z9-C071-LV | 2027-06-19 → 2027-06-15 (-4d) | 2027-06-27 → 2027-06-22 (-5d) | -111.02d → -108d |
| RHD4CZ9C071LV3200 | Cable Laying of Low Voltage Cables for Low Voltage Network - (RD-C-7/1)-Z9-C071-LV | 2027-06-27 → 2027-06-23 (-4d) | 2027-07-04 → 2027-06-29 (-5d) | -111.02d → -108d |
| RHD4CZ9C071LV3300 | Warning tape and Backfill for Low Voltage Cables for Low Voltage Network - (RD-C-7/1)-Z9-C071-LV | 2027-07-04 → 2027-06-30 (-4d) | 2027-07-11 → 2027-07-06 (-5d) | -111.02d → -108d |
| RHD4CZ9C071LV3400 | Testing of Low Voltage Cables for Low Voltage Network - (RD-C-7/1)-Z9-C071-LV | 2027-07-11 → 2027-07-07 (-4d) | 2027-07-15 → 2027-07-11 (-4d) | -111.02d → -108d |
| 8801 | **RHD4-02-002-Z9-C071-Street Lighting Network - SL** | 2027-10-13 → 2027-10-10 (-3d) | 2027-12-27 → 2027-12-22 (-5d) |  |
| 8802 | **RHD4-02-002-C071-(SL)-Street Lighting duct banks** | 2027-10-13 → 2027-10-10 (-3d) | 2027-11-07 → 2027-11-02 (-5d) |  |
| RHD4CZ9C071SL2100 | Excavation of Duct Banks for Street Lighting Network - (RD-C-7/1)-Z9-C071-SL | 2027-10-13 → 2027-10-10 (-3d) | 2027-10-19 → 2027-10-14 (-5d) | -153.02d → -150d |
| RHD4CZ9C071SL2200 | Installation of Duct Banks for Street Lighting Network - (RD-C-7/1)-Z9-C071-SL | 2027-10-19 → 2027-10-16 (-3d) | 2027-10-27 → 2027-10-23 (-4d) | -153.02d → -150d |
| RHD4CZ9C071SL2300 | Pouring of Duct Banks for Street Lighting Network - (RD-C-7/1)-Z9-C071-SL | 2027-10-27 → 2027-10-24 (-3d) | 2027-11-02 → 2027-10-28 (-5d) | -153.02d → -150d |
| RHD4CZ9C071SL2400 | Backfilling of Duct Banks for Street Lighting Network - (RD-C-7/1)-Z9-C071-SL | 2027-11-02 → 2027-10-30 (-3d) | 2027-11-07 → 2027-11-02 (-5d) | -130.02d → -127d |
| 8803 | **RHD4-02-002-C071-(SL)-Street Lighting Drawpit** | 2027-11-02 → 2027-10-30 (-3d) | 2027-11-07 → 2027-11-02 (-5d) |  |
| RHD4CZ9C071SL5100 | Excavation of Drawpit size 600x600x900mm for Street Lighting Network - (RD-C-7/1)-Z9-C071-SL | 2027-11-02 → 2027-10-30 (-3d) | 2027-11-04 → 2027-10-31 (-4d) | -153.02d → -150d |
| RHD4CZ9C071SL5200 | Installation of Drawpit size 600x600x900mm for Street Lighting Network - (RD-C-7/1)-Z9-C071-SL | 2027-11-04 → 2027-11-01 (-3d) | 2027-11-07 → 2027-11-02 (-5d) | -153.02d → -150d |
| 8804 | **RHD4-02-002-C071-(SL)-Street Lighting cables** | 2027-11-07 → 2027-11-03 (-4d) | 2027-12-04 → 2027-11-29 (-5d) |  |
| RHD4CZ9C071SL3100 | Excavation for Street Lighting Cables for Street Lighting Network - (RD-C-7/1)-Z9-C071-SL | 2027-11-07 → 2027-11-03 (-4d) | 2027-11-15 → 2027-11-10 (-5d) | -153.02d → -150d |
| RHD4CZ9C071SL3200 | Cable Laying of Street Lighting Cables for Street Lighting Network - (RD-C-7/1)-Z9-C071-SL | 2027-11-15 → 2027-11-11 (-4d) | 2027-11-22 → 2027-11-17 (-5d) | -153.02d → -150d |
| RHD4CZ9C071SL3300 | Warning tape and Backfill for Street Lighting Cables for Street Lighting Network - (RD-C-7/1)-Z9-C071-SL | 2027-11-22 → 2027-11-18 (-4d) | 2027-11-29 → 2027-11-24 (-5d) | -153.02d → -150d |
| RHD4CZ9C071SL3400 | Testing of Street Lighting Cables for Street Lighting Network - (RD-C-7/1)-Z9-C071-SL | 2027-11-29 → 2027-11-25 (-4d) | 2027-12-04 → 2027-11-29 (-5d) | -153.02d → -150d |
| 8805 | **RHD4-02-002-C071-(SL)-Street Lighting Poles** | 2027-12-04 → 2027-11-30 (-4d) | 2027-12-25 → 2027-12-20 (-5d) |  |
| RHD4CZ9C071SL1100 | Excavation for RC Base for Lighting Poles for Street Lighting Network - (RD-C-7/1)-Z9-C071-SL | 2027-12-04 → 2027-11-30 (-4d) | 2027-12-07 → 2027-12-02 (-5d) | -153.02d → -150d |
| RHD4CZ9C071SL1200 | Installation for RC Base for Lighting Poles for Street Lighting Network - (RD-C-7/1)-Z9-C071-SL | 2027-12-07 → 2027-12-04 (-3d) | 2027-12-11 → 2027-12-06 (-5d) | -153.02d → -150d |
| RHD4CZ9C071SL1300 | Backfill for RC Base for Lighting Poles for Street Lighting Network - (RD-C-7/1)-Z9-C071-SL | 2027-12-11 → 2027-12-07 (-4d) | 2027-12-14 → 2027-12-09 (-5d) | -153.02d → -150d |
| RHD4CZ9C071SL1400 | Installation for Lighting Poles for Street Lighting Network - (RD-C-7/1)-Z9-C071-SL | 2027-12-14 → 2027-12-11 (-3d) | 2027-12-19 → 2027-12-14 (-5d) | -153.02d → -150d |
| RHD4CZ9C071SL1500 | Luminaire Installation for Lighting Poles for Street Lighting Network - (RD-C-7/1)-Z9-C071-SL | 2027-12-19 → 2027-12-15 (-4d) | 2027-12-25 → 2027-12-20 (-5d) | -153.02d → -150d |
| 8807 | **RHD4-02-002-C071-(SL)-Street Lighting Earthing System** | 2027-12-25 → 2027-12-21 (-4d) | 2027-12-27 → 2027-12-22 (-5d) |  |
| RHD4CZ9C071SL6100 | Installation of Earthing for Lighting Poles and Fedder Pillers for Street Lighting Network - (RD-C-7/1)-Z9-C071-SL | 2027-12-25 → 2027-12-21 (-4d) | 2027-12-27 → 2027-12-22 (-5d) | -153.02d → -150d |
| 8813 | **RHD4-02-002-Z9-C071-Telecommunications Network - TC** | 2027-02-14 → 2027-02-06 (-8d) | 2028-04-20 → 2028-04-12 (-8d) |  |
| 8814 | **RHD4-02-002-C071-(TC)-Telecommunications Ducts** | 2027-12-27 → 2027-12-23 (-4d) | 2028-03-18 → 2028-03-14 (-4d) |  |
| RHD4CZ9C071TC2100 | Excavation of HDPE Ducts for Telecom Network - (RD-C-7/1)-Z9-C071-TC | 2027-12-27 → 2027-12-23 (-4d) | 2028-01-12 → 2028-01-08 (-4d) | -153.02d → -150d |
| RHD4CZ9C071TC2200 | Installation of HDPE Ducts for Telecom Network - (RD-C-7/1)-Z9-C071-TC | 2028-02-01 → 2028-01-30 (-2d) | 2028-03-01 → 2028-02-23 (-7d) | -170.02d → -168d |
| RHD4CZ9C071TC2400 | Backfilling of HDPE Ducts for Telecom Network - (RD-C-7/1)-Z9-C071-TC | 2028-03-01 → 2028-02-24 (-6d) | 2028-03-18 → 2028-03-14 (-4d) | -170.02d → -168d |
| 8815 | **RHD4-02-002-C071-(TC)-Telecommunications Manholes** | 2028-03-29 → 2028-03-21 (-8d) | 2028-04-20 → 2028-04-12 (-8d) |  |
| RHD4CZ9C071TC5100 | Excavation for Manholes for Telecom Network - (RD-C-7/1)-Z9-C071-TC | 2028-03-29 → 2028-03-21 (-8d) | 2028-04-09 → 2028-04-01 (-8d) | -180d → -173d |
| RHD4CZ9C071TC5200 | Installation of Manholes for Telecom Network - (RD-C-7/1)-Z9-C071-TC | 2028-04-10 → 2028-04-02 (-8d) | 2028-04-20 → 2028-04-12 (-8d) | -180d → -173d |
| 8816 | **RHD4-02-002-C071-(TC)-Telecomminications Road Crossings** | 2027-02-14 → 2027-02-06 (-8d) | 2027-03-20 → 2027-03-08 (-12d) |  |
| RHD4CZ9C071TC3100 | Excavation for Road Crossings for Telecom Network - (RD-C-7/1)-Z9-C071-TC | 2027-02-14 → 2027-02-06 (-8d) | 2027-02-18 → 2027-02-10 (-8d) | -196d → -189d |
| RHD4CZ9C071TC3200 | Installation of Road Crossings for Telecom Network - (RD-C-7/1)-Z9-C071-TC | 2027-02-20 → 2027-02-11 (-9d) | 2027-02-28 → 2027-02-18 (-10d) | -196d → -189d |
| RHD4CZ9C071TC3300 | Pouring of Road Crossings for Telecom Network - (RD-C-7/1)-Z9-C071-TC | 2027-03-01 → 2027-02-20 (-9d) | 2027-03-08 → 2027-02-28 (-8d) | -196d → -189d |
| RHD4CZ9C071TC3400 | Backfilling of Road Crossings for Telecom Network - (RD-C-7/1)-Z9-C071-TC | 2027-03-13 → 2027-03-01 (-12d) | 2027-03-20 → 2027-03-08 (-12d) | -196d → -189d |
| 8817 | **RHD4-02-002-Z9-C071-Information and Communication Technologies - ICT** | 2027-02-14 → 2027-02-06 (-8d) | 2028-07-11 → 2028-07-03 (-8d) |  |
| 8818 | **RHD4-02-002-C071-(ICT)-Information and Communication Technologies Ducts** | 2028-04-22 → 2028-04-13 (-9d) | 2028-06-20 → 2028-06-12 (-8d) |  |
| RHD4CZ9C071ICT2100 | Excavation of HDPE Ducts for ICT Network - (RD-C-7/1)-Z9-C071-ICT | 2028-04-22 → 2028-04-13 (-9d) | 2028-05-10 → 2028-04-29 (-11d) | -180d → -173d |
| RHD4CZ9C071ICT2200 | Installation of HDPE Ducts for ICT Network - (RD-C-7/1)-Z9-C071-ICT | 2028-05-11 → 2028-04-30 (-11d) | 2028-06-04 → 2028-05-27 (-8d) | -180d → -173d |
| RHD4CZ9C071ICT2400 | Backfilling of HDPE Ducts for ICT Network - (RD-C-7/1)-Z9-C071-ICT | 2028-06-05 → 2028-05-28 (-8d) | 2028-06-20 → 2028-06-12 (-8d) | -180d → -173d |
| 8819 | **RHD4-02-002-C071-(ICT)-Information and Communication Technologies Manholes** | 2028-06-21 → 2028-06-13 (-8d) | 2028-07-11 → 2028-07-03 (-8d) |  |
| RHD4CZ9C071ICT5100 | Excavation for Manholes for ICT Network - (RD-C-7/1)-Z9-C071-ICT | 2028-06-21 → 2028-06-13 (-8d) | 2028-07-01 → 2028-06-22 (-9d) | -178d → -171d |
| RHD4CZ9C071ICT5200 | Installation of Manholes for ICT Network - (RD-C-7/1)-Z9-C071-ICT | 2028-07-02 → 2028-06-24 (-8d) | 2028-07-11 → 2028-07-03 (-8d) | -178d → -171d |

| ID | Task | Start | Finish | Total float |
| --- | --- | --- | --- | --- |
| 8820 | **RHD4-02-002-C071-(ICT)-Information and Communication Technologies Road Crossings** | 2027-02-14 → 2027-02-06 (-8d) | 2027-03-07 → 2027-02-27 (-8d) |  |
| RHD4CZ9C071ICT3100 | Excavation for Road Crossings for ICT Network - (RD-C-7/1)-Z9-C071-ICT | 2027-02-14 → 2027-02-06 (-8d) | 2027-02-17 → 2027-02-09 (-8d) | -188d → -181d |
| RHD4CZ9C071ICT3200 | Installation of Road Crossings for ICT Network - (RD-C-7/1)-Z9-C071-ICT | 2027-02-18 → 2027-02-10 (-8d) | 2027-02-24 → 2027-02-15 (-9d) | -188d → -181d |
| RHD4CZ9C071ICT3300 | Pouring of Road Crossings for ICT Network - (RD-C-7/1)-Z9-C071-ICT | 2027-02-25 → 2027-02-16 (-9d) | 2027-03-02 → 2027-02-21 (-9d) | -188d → -181d |
| RHD4CZ9C071ICT3400 | Backfilling of Road Crossings for ICT Network - (RD-C-7/1)-Z9-C071-ICT | 2027-03-03 → 2027-02-23 (-8d) | 2027-03-07 → 2027-02-27 (-8d) | -188d → -181d |
| 8821 | **RHD4-02-002-Z9-C071-Security Network - CCTV** | 2028-07-02 → 2028-06-24 (-8d) | 2028-08-01 → 2028-07-24 (-8d) |  |
| 8822 | **RHD4-02-002-C071-(CCTV)-Civil Works** | 2028-07-02 → 2028-06-24 (-8d) | 2028-07-06 → 2028-06-28 (-8d) |  |
| RHD4CZ9C071CCTV2100 | Civil Works for Security Network - (RD-C-7/1)-Z9-C071-CCTV | 2028-07-02 → 2028-06-24 (-8d) | 2028-07-06 → 2028-06-28 (-8d) | -178d → -171d |
| 8823 | **RHD4-02-002-C071-(CCTV)-CCTV Poles** | 2028-07-08 → 2028-06-29 (-9d) | 2028-07-18 → 2028-07-10 (-8d) |  |
| RHD4CZ9C071CCTV1100 | Excavation for RC Base for CCTV Poles for Security Network - (RD-C-7/1)-Z9-C071-CCTV | 2028-07-08 → 2028-06-29 (-9d) | 2028-07-09 → 2028-07-01 (-8d) | -178d → -171d |
| RHD4CZ9C071CCTV1200 | Installation for RC Base for CCTV Poles for Security Network - (RD-C-7/1)-Z9-C071-CCTV | 2028-07-10 → 2028-07-02 (-8d) | 2028-07-11 → 2028-07-03 (-8d) | -178d → -171d |
| RHD4CZ9C071CCTV1300 | Backfill for RC Base for CCTV Poles for Security Network - (RD-C-7/1)-Z9-C071-CCTV | 2028-07-12 → 2028-07-04 (-8d) | 2028-07-13 → 2028-07-05 (-8d) | -178d → -171d |
| RHD4CZ9C071CCTV1400 | Installation for CCTV Poles for Security Network - (RD-C-7/1)-Z9-C071-CCTV | 2028-07-15 → 2028-07-06 (-9d) | 2028-07-16 → 2028-07-08 (-8d) | -178d → -171d |
| RHD4CZ9C071CCTV1500 | Protection post Installation for CCTV Poles for Security Network - (RD-C-7/1)-Z9-C071-CCTV | 2028-07-17 → 2028-07-09 (-8d) | 2028-07-18 → 2028-07-10 (-8d) | -178d → -171d |
| 8824 | **RHD4-02-002-C071-(CCTV)-Camera** | 2028-07-19 → 2028-07-11 (-8d) | 2028-07-20 → 2028-07-12 (-8d) |  |
| RHD4CZ9C071CCTV3100 | Installation for Cameras for Security Network - (RD-C-7/1)-Z9-C071-CCTV | 2028-07-19 → 2028-07-11 (-8d) | 2028-07-20 → 2028-07-12 (-8d) | -178d → -171d |
| 8825 | **RHD4-02-002-C071-(CCTV)-Power and Infrastructure** | 2028-07-22 → 2028-07-13 (-9d) | 2028-07-23 → 2028-07-15 (-8d) |  |
| RHD4CZ9C071CCTV4100 | Installation of Power outlet, UPS and midspan for PTZ Camerafor Cameras for Security Network - (RD-C-7/1)-Z9-C071-CCTV | 2028-07-22 → 2028-07-13 (-9d) | 2028-07-23 → 2028-07-15 (-8d) | -178d → -171d |
| 8827 | **RHD4-02-002-C071-(CCTV)-CCTV Panels and Components** | 2028-07-24 → 2028-07-16 (-8d) | 2028-08-01 → 2028-07-24 (-8d) |  |
| RHD4CZ9C071CCTV6100 | Installation for CCTV Panels for Security Network - (RD-C-7/1)-Z9-C071-CCTV | 2028-07-24 → 2028-07-16 (-8d) | 2028-08-01 → 2028-07-24 (-8d) | -173d → -166d |
| 8838 | **RHD4-02-002-Z9-L05** |  | 2027-08-29 → 2027-08-24 (-5d) |  |
| 9017 | **RHD4-02-002-Z9-L05-Road Works - RD** | 2027-02-04 → 2027-02-06 (+2d) | 2027-08-29 → 2027-08-24 (-5d) |  |
| 9018 | **RHD4-02-002-L05-(RD)-Subgrade** | 2027-02-04 → 2027-02-06 (+2d) | 2027-02-06 → 2027-02-07 (+1d) |  |
| RHD4CZ9L05RD1100 | Supply, lay and compaction subgrade compacted thickness 300 mm for Roads - (RD-L-5)-Z9-L05-RD | 2027-02-04 → 2027-02-06 (+2d) | 2027-02-06 → 2027-02-07 (+1d) | -149d → -150d |
| 9019 | **RHD4-02-002-L05-(RD)-Aggregate Base Course** | 2027-02-07 → 2027-02-08 (+1d) | 2027-02-08 → 2027-02-09 (+1d) |  |
| RHD4CZ9L05RD2100 | Supply, lay and compaction Aggregate base course compacted thickness 300 mmfor Roads - (RD-L-5)-Z9-L05-RD | 2027-02-07 → 2027-02-08 (+1d) | 2027-02-08 → 2027-02-09 (+1d) | -149d → -150d |
| 9020 | **RHD4-02-002-L05-(RD)-Bituminous base course Two Layers, including (MC1)&(RC2)** | 2027-02-09 → 2027-02-10 (+1d) | 2027-08-03 → 2027-07-29 (-5d) |  |
| RHD4CZ9L05RD3100 | Supply, lay and Asphaltic base course including Prime Coat (MC1) for 1st Layer - (RD-L-5)-Z9-L05-RD | 2027-02-09 → 2027-02-10 (+1d) | 2027-02-10 → 2027-02-11 (+1d) | -149d → -150d |
| RHD4CZ9L05RD3200 | Supply, lay and Asphaltic base course including Tack Coat (RC2) for 2nd Layer - (RD-L-5)-Z9-L05-RD | 2027-08-01 → 2027-07-28 (-4d) | 2027-08-03 → 2027-07-29 (-5d) | -131.02d → -128d |
| 9022 | **RHD4-02-002-L05-(RD)-Precast Concrete Curb** | 2027-08-03 → 2027-07-31 (-3d) | 2027-08-09 → 2027-08-04 (-5d) |  |
| RHD4CZ9L05RD5100 | Supply and installation Precast Concrete Kerb for Roads - (RD-L-5)-Z9-L05-RD | 2027-08-03 → 2027-07-31 (-3d) | 2027-08-09 → 2027-08-04 (-5d) | -131.02d → -128d |
| 9025 | **RHD4-02-002-L05-(RD)-Traffic Signage** | 2027-08-09 → 2027-08-05 (-4d) | 2027-08-16 → 2027-08-11 (-5d) |  |
| RHD4CZ9L05RD8100 | Installation of Traffic Signage for Road Network - (RD-L-5)-Z9-L05-RD | 2027-08-09 → 2027-08-05 (-4d) | 2027-08-16 → 2027-08-11 (-5d) | -131.02d → -128d |
| 9023 | **RHD4-02-002-L05-(RD)-Precast Interlocking Block Pavers** | 2027-08-16 → 2027-08-12 (-4d) | 2027-08-18 → 2027-08-14 (-4d) |  |
| RHD4CZ9L05RD6100 | Interlocking block pavers for sidewalk-footpath for Side walks and Parking areas - (RD-L-5)-Z9-L05-RD | 2027-08-16 → 2027-08-12 (-4d) | 2027-08-18 → 2027-08-14 (-4d) | -131.02d → -128d |
| 9021 | **RHD4-02-002-L05-(RD)-Bituminous concrete wearing course including tack coat (RC2)** | 2027-08-18 → 2027-08-15 (-3d) | 2027-08-21 → 2027-08-16 (-5d) |  |
| RHD4CZ9L05RD4100 | Supply, lay and compaction Asphaltic wearing course including tack Coat (RC2)for Road Network - (RD-L-5)-Z9-L05-RD | 2027-08-18 → 2027-08-15 (-3d) | 2027-08-21 → 2027-08-16 (-5d) | -131.02d → -128d |
| 9024 | **RHD4-02-002-L05-(RD)-Pavement Marking** | 2027-08-21 → 2027-08-17 (-4d) | 2027-08-29 → 2027-08-24 (-5d) |  |
| RHD4CZ9L05RD7100 | Pavement Markings for Road Network - (RD-L-5)-Z9-L05-RD | 2027-08-21 → 2027-08-17 (-4d) | 2027-08-29 → 2027-08-24 (-5d) | -131.02d → -128d |
| 8842 | **RHD4-02-002-Z9-L05-Storm Network - ST** |  | 2027-05-29 → 2027-05-24 (-5d) |  |
| 8859 | **RHD4-02-002-L05-(ST)-MH Works - 1200 mm diameter** |  | 2027-05-29 → 2027-05-24 (-5d) |  |
| RHD4CZ9L05ST3300 | MH Ring and C.Slab works and Backfilling works for MH 1200 mm - (RD-L-5)-Z9-L05-ST | 2027-04-14 → 2027-04-11 (-3d) | 2027-04-17 → 2027-04-12 (-5d) | -99.02d → -96d |
| RHD4CZ9L05ST3400 | Steel Cover for MH 1200 mm - (RD-L-5)-Z9-L05-ST | 2027-05-24 → 2027-05-20 (-4d) | 2027-05-26 → 2027-05-22 (-4d) | -127.02d → -124d |
| RHD4CZ9L05ST3500 | Finishing, Benching, Testing works for MH 1200 mm - (RD-L-5)-Z9-L05-ST | 2027-05-26 → 2027-05-23 (-3d) | 2027-05-29 → 2027-05-24 (-5d) | -127.02d → -124d |
| 8845 | **RHD4-02-002-L05-(ST)-GRP Pipes - 600 mm diameter** |  | 2027-04-17 → 2027-04-12 (-5d) |  |
| RHD4CZ9L05ST1102 | Excavation works for GRP Pipe Line 600 mm - (RD-L-5)-Z9-L05-ST |  | 2027-01-05 A → 2026-11-05 A (-61d) |  |
| RHD4CZ9L05ST1202 | Bedding works for GRP Pipe Line 600 mm - (RD-L-5)-Z9-L05-ST |  | 2027-01-07 A → 2026-11-07 A (-61d) |  |
| RHD4CZ9L05ST1302 | Installing for GRP Pipe Line 600 mm - (RD-L-5)-Z9-L05-ST |  | 2027-01-10 A → 2026-11-08 A (-63d) |  |
| RHD4CZ9L05ST1502 | Backfilling and warning tape works for GRP Pipe Line 600 mm - (RD-L-5)-Z9-L05-ST |  | 2027-01-14 A → 2026-11-10 A (-65d) |  |
| RHD4CZ9L05ST1402 | Primary Test for GRP Pipe Line 600 mm - (RD-L-5)-Z9-L05-ST | 2027-04-14 → 2027-04-11 (-3d) | 2027-04-17 → 2027-04-12 (-5d) | -138.02d → -135d |
| 8844 | **RHD4-02-002-L05-(ST)-GRP Pipes - 500 mm diameter** |  | 2027-04-17 → 2027-04-12 (-5d) |  |
| RHD4CZ9L05ST1401 | Primary Test for GRP Pipe Line 500 mm - (RD-L-5)-Z9-L05-ST | 2027-04-14 → 2027-04-11 (-3d) | 2027-04-17 → 2027-04-12 (-5d) | -138.02d → -135d |
| 8857 | **RHD4-02-002-L05-(ST)-UPVC Pipes - 300 mm diameter** |  | 2027-04-17 → 2027-04-12 (-5d) |  |
| RHD4CZ9L05ST2400 | Primary Test for UPVC Pipe Line 300 mm - (RD-L-5)-Z9-L05-ST | 2027-04-14 → 2027-04-11 (-3d) | 2027-04-17 → 2027-04-12 (-5d) | -138.02d → -135d |
| 8865 | **RHD4-02-002-L05-(ST)-Concrete Encasement** | 2027-04-14 → 2027-04-11 (-3d) | 2027-04-17 → 2027-04-12 (-5d) |  |
| RHD4CZ9L05ST6100 | Pipe Encasement for Storm Pipelines - (RD-L-5)-Z9-L05-ST | 2027-04-14 → 2027-04-11 (-3d) | 2027-04-17 → 2027-04-12 (-5d) | -138.02d → -135d |
| 8866 | **RHD4-02-002-Z9-L05-Catch Basin - ST** |  | 2027-02-03 → 2027-02-04 (+1d) |  |
| 8867 | **RHD4-02-002-L05-(ST)-Single Catch Basin Works** |  | 2027-02-03 → 2027-02-04 (+1d) |  |
| RHD4CZ9L05ST7200 | PC Blinding, Installation and Pipe connection for Single Catch Basin - (RD-L-5)-Z9-L05-ST |  | 2027-01-27 → 2027-01-28 (+1d) | -149d → -150d |
| RHD4CZ9L05ST7300 | Rings & C.Slab & Final Backfill for Single Catch Basin - (RD-L-5)-Z9-L05-ST |  | 2027-01-30 → 2027-01-31 (+1d) | -149d → -150d |
| RHD4CZ9L05ST7400 | Steel Cover for Single Catch Basin - (RD-L-5)-Z9-L05-ST | 2027-01-31 → 2027-02-01 (+1d) | 2027-02-01 → 2027-02-02 (+1d) | -149d → -150d |
| RHD4CZ9L05ST7500 | Finishing and Insulation works for Single Catch Basin - (RD-L-5)-Z9-L05-ST | 2027-02-02 → 2027-02-03 (+1d) | 2027-02-03 → 2027-02-04 (+1d) | -149d → -150d |
| 8891 | **RHD4-02-002-Z9-L05-Sewage Network - SW** | 2027-04-17 → 2027-04-13 (-4d) | 2027-05-12 → 2027-05-08 (-4d) |  |
| 1895 | **RHD4-02-002-L05-(SW)-GRP Pipes - 500 mm diameter** | 2027-04-17 → 2027-04-13 (-4d) | 2027-04-28 → 2027-04-24 (-4d) |  |
| RHD4CZ9L05SW1102 | Excavation works for GRP Pipe Line 500 mm - (RD-L-5)-Z9-L05-SW | 2027-04-17 → 2027-04-13 (-4d) | 2027-04-19 → 2027-04-14 (-5d) | -138.02d → -135d |
| RHD4CZ9L05SW1202 | Bedding works for GRP Pipe Line 500 mm - (RD-L-5)-Z9-L05-SW | 2027-04-19 → 2027-04-15 (-4d) | 2027-04-21 → 2027-04-17 (-4d) | -138.02d → -135d |
| RHD4CZ9L05SW1302 | Installing for GRP Pipe Line 500 mm - (RD-L-5)-Z9-L05-SW | 2027-04-21 → 2027-04-18 (-3d) | 2027-04-24 → 2027-04-19 (-5d) | -138.02d → -135d |
| RHD4CZ9L05SW1402 | Primary Test for GRP Pipe Line 500 mm - (RD-L-5)-Z9-L05-SW | 2027-04-24 → 2027-04-20 (-4d) | 2027-04-26 → 2027-04-21 (-5d) | -138.02d → -135d |
| RHD4CZ9L05SW1502 | Backfilling and warning tape works for GRP Pipe Line 500 mm - (RD-L-5)-Z9-L05-SW | 2027-04-26 → 2027-04-22 (-4d) | 2027-04-28 → 2027-04-24 (-4d) | -138.02d → -135d |
| 3794 | **RHD4-02-002-L05-(SW)-MH Works - 1200 mm diameter** | 2027-04-19 → 2027-04-15 (-4d) | 2027-05-12 → 2027-05-08 (-4d) |  |

| ID | Task | Start | Finish | Total float |
| --- | --- | --- | --- | --- |
| RHD4CZ9L05SW3100 | Excavation and PC Blinding works for MH 1200 mm - (RD-L-5)-Z9-L05-SW | 2027-04-19 → 2027-04-15 (-4d) | 2027-04-22 → 2027-04-18 (-4d) | -138.02d → -135d |
| RHD4CZ9L05SW3200 | Installation of Base for MH 1200 mm - (RD-L-5)-Z9-L05-SW | 2027-04-22 → 2027-04-19 (-3d) | 2027-04-28 → 2027-04-24 (-4d) | -138.02d → -135d |
| RHD4CZ9L05SW3300 | MH Ring and C.Slab works and Backfilling works for MH 1200 mm - (RD-L-5)-Z9-L05-SW | 2027-04-28 → 2027-04-25 (-3d) | 2027-05-04 → 2027-04-29 (-5d) | -138.02d → -135d |
| RHD4CZ9L05SW3400 | Steel Cover for MH 1200 mm - (RD-L-5)-Z9-L05-SW | 2027-05-04 → 2027-05-01 (-3d) | 2027-05-06 → 2027-05-02 (-4d) | -138.02d → -135d |
| RHD4CZ9L05SW3500 | Finishing, Benching, Testing works for MH 1200 mm - (RD-L-5)-Z9-L05-SW | 2027-05-06 → 2027-05-03 (-3d) | 2027-05-12 → 2027-05-08 (-4d) | -138.02d → -135d |
| 8928 | **RHD4-02-002-Z9-L05-Potable Network - PT** | 2027-04-28 → 2027-04-25 (-3d) | 2027-05-26 → 2027-05-22 (-4d) |  |
| 8930 | **RHD4-02-002-L05-(PT)-HDPE Pipes - 160 mm diameter** | 2027-04-28 → 2027-04-25 (-3d) | 2027-05-10 → 2027-05-05 (-5d) |  |
| RHD4CZ9L05PT1101 | Excavation works for HDPE Pipline 160 mm - (RD-L-5)-Z9-L05-PT | 2027-04-28 → 2027-04-25 (-3d) | 2027-05-01 → 2027-04-26 (-5d) | -138.02d → -135d |
| RHD4CZ9L05PT1201 | Bedding works for HDPE Pipline 160 mm - (RD-L-5)-Z9-L05-PT | 2027-05-01 → 2027-04-27 (-4d) | 2027-05-03 → 2027-04-28 (-5d) | -138.02d → -135d |
| RHD4CZ9L05PT1301 | Installing for HDPE Pipline 160 mm - (RD-L-5)-Z9-L05-PT | 2027-05-03 → 2027-04-29 (-4d) | 2027-05-05 → 2027-05-01 (-4d) | -138.02d → -135d |
| RHD4CZ9L05PT1401 | Primary Test for HDPE Pipline 160 mm - (RD-L-5)-Z9-L05-PT | 2027-05-05 → 2027-05-02 (-3d) | 2027-05-08 → 2027-05-03 (-5d) | -138.02d → -135d |
| RHD4CZ9L05PT1501 | Backfilling and warning tape works for HDPE Pipline 160 mm - (RD-L-5)-Z9-L05-PT | 2027-05-08 → 2027-05-04 (-4d) | 2027-05-10 → 2027-05-05 (-5d) | -138.02d → -135d |
| 6483 | **RHD4-02-002-L05-(PT)-Concrete Encasement** | 2027-05-03 → 2027-04-29 (-4d) | 2027-05-05 → 2027-05-01 (-4d) |  |
| RHD4CZ9L05PT5100 | Pipe Encasement for Potable Pipelines - (RD-L-5)-Z9-L05-PT | 2027-05-03 → 2027-04-29 (-4d) | 2027-05-05 → 2027-05-01 (-4d) | -131.02d → -128d |
| 8939 | **RHD4-02-002-L05-(PT)-Air Valve Chambers** | 2027-05-01 → 2027-04-27 (-4d) | 2027-05-10 → 2027-05-05 (-5d) |  |
| RHD4CZ9L05PT2102 | Excavation and Bedding for Air Valve Chambers for Potable Water Network - (RD-L-5)-Z9-L05-PT | 2027-05-01 → 2027-04-27 (-4d) | 2027-05-03 → 2027-04-28 (-5d) | -138.02d → -135d |
| RHD4CZ9L05PT2202 | PC works for Air Valve Chambers for Potable Water Network - (RD-L-5)-Z9-L05-PT | 2027-05-03 → 2027-04-29 (-4d) | 2027-05-05 → 2027-05-01 (-4d) | -138.02d → -135d |
| RHD4CZ9L05PT2302 | Installation for Air Valve Chambers for Potable Water Network - (RD-L-5)-Z9-L05-PT | 2027-05-05 → 2027-05-02 (-3d) | 2027-05-08 → 2027-05-03 (-5d) | -138.02d → -135d |
| RHD4CZ9L05PT2402 | Backfilling works for Air Valve Chambers for Potable Water Network - (RD-L-5)-Z9-L05-PT | 2027-05-08 → 2027-05-04 (-4d) | 2027-05-10 → 2027-05-05 (-5d) | -138.02d → -135d |
| 8940 | **RHD4-02-002-L05-(PT)-Air Valves** | 2027-05-05 → 2027-05-02 (-3d) | 2027-05-10 → 2027-05-05 (-5d) |  |
| RHD4CZ9L05PT3103 | Installation for Air Valves for Potable Water Network - (RD-L-5)-Z9-L05-PT | 2027-05-05 → 2027-05-02 (-3d) | 2027-05-08 → 2027-05-03 (-5d) | -138.02d → -135d |
| RHD4CZ9L05PT3203 | Stem and Service box for Air Valves for Potable Water Network - (RD-L-5)-Z9-L05-PT | 2027-05-08 → 2027-05-04 (-4d) | 2027-05-10 → 2027-05-05 (-5d) | -138.02d → -135d |
| 8941 | **RHD4-02-002-L05-(PT)-Fire Hydrant** | 2027-05-10 → 2027-05-06 (-4d) | 2027-05-26 → 2027-05-22 (-4d) |  |
| RHD4CZ9L05PT4100 | Excavation and Bedding and Pipe Installation for Fire Hydrant - (RD-L-5)-Z9-L05-PT | 2027-05-10 → 2027-05-06 (-4d) | 2027-05-12 → 2027-05-08 (-4d) | -130.02d → -127d |
| RHD4CZ9L05PT4200 | Valve Installation for Fire Hydrant - (RD-L-5)-Z9-L05-PT | 2027-05-12 → 2027-05-09 (-3d) | 2027-05-19 → 2027-05-10 (-9d) | -130.02d → -127d |
| RHD4CZ9L05PT4300 | Stem for Fire Hydrant - (RD-L-5)-Z9-L05-PT | 2027-05-19 → 2027-05-11 (-8d) | 2027-05-22 → 2027-05-12 (-10d) | -130.02d → -127d |
| RHD4CZ9L05PT4400 | Fire Installation for Fire Hydrant - (RD-L-5)-Z9-L05-PT | 2027-05-22 → 2027-05-13 (-9d) | 2027-05-24 → 2027-05-19 (-5d) | -130.02d → -127d |
| RHD4CZ9L05PT4500 | Protection Barriers for Fire Hydrant - (RD-L-5)-Z9-L05-PT | 2027-05-24 → 2027-05-20 (-4d) | 2027-05-26 → 2027-05-22 (-4d) | -130.02d → -127d |
| 8934 | **RHD4-02-002-L05-(PT)-Gate Valves (Direct Buried)** | 2027-05-03 → 2027-04-29 (-4d) | 2027-05-12 → 2027-05-08 (-4d) |  |
| RHD4CZ9L05PT3100 | Installation for Direct Buried Gate Valves - (RD-L-5)-Z9-L05-PT | 2027-05-03 → 2027-04-29 (-4d) | 2027-05-05 → 2027-05-01 (-4d) | -134.02d → -131d |
| RHD4CZ9L05PT3200 | Stem and Service box for Direct Buried Gate Valves - (RD-L-5)-Z9-L05-PT | 2027-05-10 → 2027-05-06 (-4d) | 2027-05-12 → 2027-05-08 (-4d) | -138.02d → -135d |
| 8943 | **RHD4-02-002-Z9-L05-Irrigation Network - IRR** | 2027-05-10 → 2027-05-06 (-4d) | 2027-05-26 → 2027-05-22 (-4d) |  |
| 8951 | **RHD4-02-002-L05-(IRR)-HDPE Pipes - 500 mm diameter** | 2027-05-10 → 2027-05-06 (-4d) | 2027-05-26 → 2027-05-22 (-4d) |  |
| RHD4CZ9L05IRR1107 | Excavation works for HDPE Pipline 500 mm - (RD-L-5)-Z9-L05-IRR | 2027-05-10 → 2027-05-06 (-4d) | 2027-05-12 → 2027-05-08 (-4d) | -131.02d → -128d |
| RHD4CZ9L05IRR1207 | Bedding works for HDPE Pipline 500 mm - (RD-L-5)-Z9-L05-IRR | 2027-05-12 → 2027-05-09 (-3d) | 2027-05-19 → 2027-05-10 (-9d) | -131.02d → -128d |
| RHD4CZ9L05IRR1307 | Installing for HDPE Pipline 500 mm - (RD-L-5)-Z9-L05-IRR | 2027-05-19 → 2027-05-11 (-8d) | 2027-05-22 → 2027-05-12 (-10d) | -131.02d → -128d |
| RHD4CZ9L05IRR1407 | Primary Test for HDPE Pipline 500 mm - (RD-L-5)-Z9-L05-IRR | 2027-05-22 → 2027-05-13 (-9d) | 2027-05-24 → 2027-05-19 (-5d) | -131.02d → -128d |
| RHD4CZ9L05IRR1507 | Backfilling and warning tape works for HDPE Pipline 500 mm - (RD-L-5)-Z9-L05-IRR | 2027-05-24 → 2027-05-20 (-4d) | 2027-05-26 → 2027-05-22 (-4d) | -131.02d → -128d |
| 8977 | **RHD4-02-002-Z9-L05-Medium Voltage Network - MV** | 2027-02-11 → 2027-02-13 (+2d) | 2027-02-20 → 2027-02-21 (+1d) |  |
| 8979 | **RHD4-02-002-L05-(MV)-Medium Voltage duct banks** | 2027-02-11 → 2027-02-13 (+2d) | 2027-02-20 → 2027-02-21 (+1d) |  |
| RHD4CZ9L05MV2100 | Excavation of Duct Banks for Medium Voltage Network - (RD-L-5)-Z9-L05-MV | 2027-02-11 → 2027-02-13 (+2d) | 2027-02-13 → 2027-02-14 (+1d) | -149d → -150d |
| RHD4CZ9L05MV2200 | Installation of Duct Banks for Medium Voltage Network - (RD-L-5)-Z9-L05-MV | 2027-02-14 → 2027-02-15 (+1d) | 2027-02-15 → 2027-02-16 (+1d) | -149d → -150d |
| RHD4CZ9L05MV2300 | Pouring of Duct Banks for Medium Voltage Network - (RD-L-5)-Z9-L05-MV | 2027-02-16 → 2027-02-17 (+1d) | 2027-02-17 → 2027-02-18 (+1d) | -149d → -150d |
| RHD4CZ9L05MV2400 | Backfilling of Duct Banks for Medium Voltage Network - (RD-L-5)-Z9-L05-MV | 2027-02-18 → 2027-02-20 (+2d) | 2027-02-20 → 2027-02-21 (+1d) | -149d → -150d |
| 8980 | **RHD4-02-002-L05-(MV)-Medium Voltage cables 3Cx 500 mm²** | 2027-02-11 → 2027-02-13 (+2d) | 2027-02-15 → 2027-02-16 (+1d) |  |
| RHD4CZ9L05MV3100 | Installation of Medium Voltage Cables 3Cx 500 mm² - (RD-L-5)-Z9-L05-MV | 2027-02-11 → 2027-02-13 (+2d) | 2027-02-13 → 2027-02-14 (+1d) | -148d → -149d |
| RHD4CZ9L05MV3300 | Testing of Medium Voltage Cables 3Cx 500 mm² - (RD-L-5)-Z9-L05-MV | 2027-02-14 → 2027-02-15 (+1d) | 2027-02-15 → 2027-02-16 (+1d) | -148d → -149d |
| 8984 | **RHD4-02-002-Z9-L05-Low Voltage Network - LV** | 2027-05-26 → 2027-05-23 (-3d) | 2027-06-09 → 2027-06-05 (-4d) |  |
| 8987 | **RHD4-02-002-L05-(LV)-Low Voltage cables** | 2027-05-26 → 2027-05-23 (-3d) | 2027-06-09 → 2027-06-05 (-4d) |  |
| RHD4CZ9L05LV3100 | Excavation for Low Voltage Cables for Low Voltage Network - (RD-L-5)-Z9-L05-LV | 2027-05-26 → 2027-05-23 (-3d) | 2027-05-31 → 2027-05-26 (-5d) | -131.02d → -128d |
| RHD4CZ9L05LV3200 | Cable Laying of Low Voltage Cables for Low Voltage Network - (RD-L-5)-Z9-L05-LV | 2027-05-31 → 2027-05-27 (-4d) | 2027-06-03 → 2027-05-30 (-4d) | -131.02d → -128d |
| RHD4CZ9L05LV3300 | Warning tape and Backfill for Low Voltage Cables for Low Voltage Network - (RD-L-5)-Z9-L05-LV | 2027-06-03 → 2027-05-31 (-3d) | 2027-06-07 → 2027-06-02 (-5d) | -131.02d → -128d |
| RHD4CZ9L05LV3400 | Testing of Low Voltage Cables for Low Voltage Network - (RD-L-5)-Z9-L05-LV | 2027-06-07 → 2027-06-03 (-4d) | 2027-06-09 → 2027-06-05 (-4d) | -131.02d → -128d |
| 8990 | **RHD4-02-002-Z9-L05-Street Lighting Network - SL** | 2027-05-10 → 2027-05-06 (-4d) | 2027-07-08 → 2027-07-04 (-4d) |  |
| 8991 | **RHD4-02-002-L05-(SL)-Street Lighting duct banks** | 2027-05-10 → 2027-05-06 (-4d) | 2027-05-24 → 2027-05-19 (-5d) |  |
| RHD4CZ9L05SL2100 | Excavation of Duct Banks for Street Lighting Network - (RD-L-5)-Z9-L05-SL | 2027-05-10 → 2027-05-06 (-4d) | 2027-05-12 → 2027-05-08 (-4d) | -117.02d → -114d |
| RHD4CZ9L05SL2200 | Installation of Duct Banks for Street Lighting Network - (RD-L-5)-Z9-L05-SL | 2027-05-12 → 2027-05-09 (-3d) | 2027-05-19 → 2027-05-10 (-9d) | -117.02d → -114d |
| RHD4CZ9L05SL2300 | Pouring of Duct Banks for Street Lighting Network - (RD-L-5)-Z9-L05-SL | 2027-05-19 → 2027-05-11 (-8d) | 2027-05-22 → 2027-05-12 (-10d) | -117.02d → -114d |
| RHD4CZ9L05SL2400 | Backfilling of Duct Banks for Street Lighting Network - (RD-L-5)-Z9-L05-SL | 2027-05-22 → 2027-05-13 (-9d) | 2027-05-24 → 2027-05-19 (-5d) | -117.02d → -114d |
| 8992 | **RHD4-02-002-L05-(SL)-Street Lighting Drawpit** | 2027-06-09 → 2027-06-06 (-3d) | 2027-06-14 → 2027-06-09 (-5d) |  |
| RHD4CZ9L05SL5100 | Excavation of Drawpit size 600x600x900mm for Street Lighting Network - (RD-L-5)-Z9-L05-SL | 2027-06-09 → 2027-06-06 (-3d) | 2027-06-12 → 2027-06-07 (-5d) | -131.02d → -128d |
| RHD4CZ9L05SL5200 | Installation of Drawpit size 600x600x900mm for Street Lighting Network - (RD-L-5)-Z9-L05-SL | 2027-06-12 → 2027-06-08 (-4d) | 2027-06-14 → 2027-06-09 (-5d) | -131.02d → -128d |
| 8993 | **RHD4-02-002-L05-(SL)-Street Lighting cables** | 2027-06-14 → 2027-06-10 (-4d) | 2027-06-24 → 2027-06-20 (-4d) |  |
| RHD4CZ9L05SL3100 | Excavation for Street Lighting Cables for Street Lighting Network - (RD-L-5)-Z9-L05-SL | 2027-06-14 → 2027-06-10 (-4d) | 2027-06-17 → 2027-06-13 (-4d) | -131.02d → -128d |
| RHD4CZ9L05SL3200 | Cable Laying of Street Lighting Cables for Street Lighting Network - (RD-L-5)-Z9-L05-SL | 2027-06-17 → 2027-06-14 (-3d) | 2027-06-20 → 2027-06-15 (-5d) | -131.02d → -128d |
| RHD4CZ9L05SL3300 | Warning tape and Backfill for Street Lighting Cables for Street Lighting Network - (RD-L-5)-Z9-L05-SL | 2027-06-20 → 2027-06-16 (-4d) | 2027-06-22 → 2027-06-17 (-5d) | -131.02d → -128d |
| RHD4CZ9L05SL3400 | Testing of Street Lighting Cables for Street Lighting Network - (RD-L-5)-Z9-L05-SL | 2027-06-22 → 2027-06-19 (-3d) | 2027-06-24 → 2027-06-20 (-4d) | -131.02d → -128d |
| 8994 | **RHD4-02-002-L05-(SL)-Street Lighting Poles** | 2027-06-24 → 2027-06-21 (-3d) | 2027-07-06 → 2027-07-01 (-5d) |  |
| RHD4CZ9L05SL1100 | Excavation for RC Base for Lighting Poles for Street Lighting Network - (RD-L-5)-Z9-L05-SL | 2027-06-24 → 2027-06-21 (-3d) | 2027-06-27 → 2027-06-22 (-5d) | -131.02d → -128d |
| RHD4CZ9L05SL1200 | Installation for RC Base for Lighting Poles for Street Lighting Network - (RD-L-5)-Z9-L05-SL | 2027-06-27 → 2027-06-23 (-4d) | 2027-06-29 → 2027-06-24 (-5d) | -131.02d → -128d |

| ID | Task | Start | Finish | Total float |
| --- | --- | --- | --- | --- |
| RHD4CZ9L05SL1300 | Backfill for RC Base for Lighting Poles for Street Lighting Network - (RD-L-5)-Z9-L05-SL | 2027-06-29 → 2027-06-26 (-3d) | 2027-07-01 → 2027-06-27 (-4d) | -131.02d → -128d |
| RHD4CZ9L05SL1400 | Installation for Lighting Poles for Street Lighting Network - (RD-L-5)-Z9-L05-SL | 2027-07-01 → 2027-06-28 (-3d) | 2027-07-04 → 2027-06-29 (-5d) | -131.02d → -128d |
| RHD4CZ9L05SL1500 | Luminaire Installation for Lighting Poles for Street Lighting Network - (RD-L-5)-Z9-L05-SL | 2027-07-04 → 2027-06-30 (-4d) | 2027-07-06 → 2027-07-01 (-5d) | -131.02d → -128d |
| 8996 | **RHD4-02-002-L05-(SL)-Street Lighting Earthing System** | 2027-07-06 → 2027-07-03 (-3d) | 2027-07-08 → 2027-07-04 (-4d) |  |
| RHD4CZ9L05SL6100 | Installation of Earthing for Lighting Poles and Fedder Pillers for Street Lighting Network - (RD-L-5)-Z9-L05-SL | 2027-07-06 → 2027-07-03 (-3d) | 2027-07-08 → 2027-07-04 (-4d) | -131.02d → -128d |
| 9002 | **RHD4-02-002-Z9-L05-Telecommunications Network - TC** | 2027-07-08 → 2027-07-05 (-3d) | 2027-07-25 → 2027-07-20 (-5d) |  |
| 9003 | **RHD4-02-002-L05-(TC)-Telecommunications Ducts** | 2027-07-08 → 2027-07-05 (-3d) | 2027-07-20 → 2027-07-15 (-5d) |  |
| RHD4CZ9L05TC2100 | Excavation of HDPE Ducts for Telecom Network - (RD-L-5)-Z9-L05-TC | 2027-07-08 → 2027-07-05 (-3d) | 2027-07-12 → 2027-07-07 (-5d) | -131.02d → -128d |
| RHD4CZ9L05TC2200 | Installation of HDPE Ducts for Telecom Network - (RD-L-5)-Z9-L05-TC | 2027-07-12 → 2027-07-08 (-4d) | 2027-07-17 → 2027-07-12 (-5d) | -131.02d → -128d |
| RHD4CZ9L05TC2400 | Backfilling of HDPE Ducts for Telecom Network - (RD-L-5)-Z9-L05-TC | 2027-07-17 → 2027-07-13 (-4d) | 2027-07-20 → 2027-07-15 (-5d) | -131.02d → -128d |
| 9004 | **RHD4-02-002-L05-(TC)-Telecommunications Manholes** | 2027-07-20 → 2027-07-17 (-3d) | 2027-07-25 → 2027-07-20 (-5d) |  |
| RHD4CZ9L05TC5100 | Excavation for Manholes for Telecom Network - (RD-L-5)-Z9-L05-TC | 2027-07-20 → 2027-07-17 (-3d) | 2027-07-22 → 2027-07-18 (-4d) | -131.02d → -128d |
| RHD4CZ9L05TC5200 | Installation of Manholes for Telecom Network - (RD-L-5)-Z9-L05-TC | 2027-07-22 → 2027-07-19 (-3d) | 2027-07-25 → 2027-07-20 (-5d) | -131.02d → -128d |
| 9006 | **RHD4-02-002-Z9-L05-Information and Communication Technologies - ICT** | 2027-07-25 → 2027-07-21 (-4d) | 2027-08-01 → 2027-07-27 (-5d) |  |
| 9007 | **RHD4-02-002-L05-(ICT)-Information and Communication Technologies Ducts** | 2027-07-25 → 2027-07-21 (-4d) | 2027-08-01 → 2027-07-27 (-5d) |  |
| RHD4CZ9L05ICT2100 | Excavation of HDPE Ducts for ICT Network - (RD-L-5)-Z9-L05-ICT | 2027-07-25 → 2027-07-21 (-4d) | 2027-07-27 → 2027-07-22 (-5d) | -131.02d → -128d |
| RHD4CZ9L05ICT2200 | Installation of HDPE Ducts for ICT Network - (RD-L-5)-Z9-L05-ICT | 2027-07-27 → 2027-07-24 (-3d) | 2027-07-29 → 2027-07-25 (-4d) | -131.02d → -128d |
| RHD4CZ9L05ICT2400 | Backfilling of HDPE Ducts for ICT Network - (RD-L-5)-Z9-L05-ICT | 2027-07-29 → 2027-07-26 (-3d) | 2027-08-01 → 2027-07-27 (-5d) | -131.02d → -128d |
| 9027 | **RHD4-02-002-Z9-L06** |  | 2027-10-30 → 2027-10-25 (-5d) |  |
| 9206 | **RHD4-02-002-Z9-L06-Road Works - RD** | 2027-01-28 → 2027-01-30 (+2d) | 2027-10-30 → 2027-10-25 (-5d) |  |
| 9207 | **RHD4-02-002-L06-(RD)-Subgrade** | 2027-01-28 → 2027-01-30 (+2d) | 2027-02-07 → 2027-02-08 (+1d) |  |
| RHD4CZ9L06RD1100 | Supply, lay and compaction subgrade compacted thickness 300 mm for Roads - (RD-L-6)-Z9-L06-RD | 2027-01-28 → 2027-01-30 (+2d) | 2027-02-07 → 2027-02-08 (+1d) | -146d → -147d |
| 9208 | **RHD4-02-002-L06-(RD)-Aggregate Base Course** | 2027-02-08 → 2027-02-09 (+1d) | 2027-02-15 → 2027-02-16 (+1d) |  |
| RHD4CZ9L06RD2100 | Supply, lay and compaction Aggregate base course compacted thickness 300 mmfor Roads - (RD-L-6)-Z9-L06-RD | 2027-02-08 → 2027-02-09 (+1d) | 2027-02-15 → 2027-02-16 (+1d) | -146d → -147d |
| 9209 | **RHD4-02-002-L06-(RD)-Bituminous base course Two Layers, including (MC1)&(RC2)** | 2027-02-27 → 2027-02-20 (-7d) | 2027-09-26 → 2027-09-20 (-6d) |  |
| RHD4CZ9L06RD3100 | Supply, lay and Asphaltic base course including Prime Coat (MC1) for 1st Layer - (RD-L-6)-Z9-L06-RD | 2027-02-27 → 2027-02-20 (-7d) | 2027-02-28 → 2027-02-21 (-7d) | -154d → -149d |
| RHD4CZ9L06RD3200 | Supply, lay and Asphaltic base course including Tack Coat (RC2) for 2nd Layer - (RD-L-6)-Z9-L06-RD | 2027-09-22 → 2027-09-19 (-3d) | 2027-09-26 → 2027-09-20 (-6d) | -102.02d → -99d |
| 9211 | **RHD4-02-002-L06-(RD)-Precast Concrete Curb** | 2027-09-26 → 2027-09-21 (-5d) | 2027-09-30 → 2027-09-26 (-4d) |  |
| RHD4CZ9L06RD5100 | Supply and installation Precast Concrete Kerb for Roads - (RD-L-6)-Z9-L06-RD | 2027-09-26 → 2027-09-21 (-5d) | 2027-09-30 → 2027-09-26 (-4d) | -102.02d → -99d |
| 9214 | **RHD4-02-002-L06-(RD)-Traffic Signage** | 2027-09-30 → 2027-09-27 (-3d) | 2027-10-10 → 2027-10-05 (-5d) |  |
| RHD4CZ9L06RD8100 | Installation of Traffic Signage for Road Network - (RD-L-6)-Z9-L06-RD | 2027-09-30 → 2027-09-27 (-3d) | 2027-10-10 → 2027-10-05 (-5d) | -102.02d → -99d |
| 9212 | **RHD4-02-002-L06-(RD)-Precast Interlocking Block Pavers** | 2027-10-10 → 2027-10-06 (-4d) | 2027-10-20 → 2027-10-16 (-4d) |  |
| RHD4CZ9L06RD6100 | Interlocking block pavers for sidewalk-footpath for Side walks and Parking areas - (RD-L-6)-Z9-L06-RD | 2027-10-10 → 2027-10-06 (-4d) | 2027-10-20 → 2027-10-16 (-4d) | -102.02d → -99d |
| 9210 | **RHD4-02-002-L06-(RD)-Bituminous concrete wearing course including tack coat (RC2)** | 2027-10-20 → 2027-10-17 (-3d) | 2027-10-23 → 2027-10-18 (-5d) |  |
| RHD4CZ9L06RD4100 | Supply, lay and compaction Asphaltic wearing course including tack Coat (RC2)for Road Network - (RD-L-6)-Z9-L06-RD | 2027-10-20 → 2027-10-17 (-3d) | 2027-10-23 → 2027-10-18 (-5d) | -102.02d → -99d |
| 9213 | **RHD4-02-002-L06-(RD)-Pavement Marking** | 2027-10-23 → 2027-10-19 (-4d) | 2027-10-30 → 2027-10-25 (-5d) |  |
| RHD4CZ9L06RD7100 | Pavement Markings for Road Network - (RD-L-6)-Z9-L06-RD | 2027-10-23 → 2027-10-19 (-4d) | 2027-10-30 → 2027-10-25 (-5d) | -102.02d → -99d |
| 9031 | **RHD4-02-002-Z9-L06-Storm Network - ST** |  | 2027-05-10 → 2027-05-05 (-5d) |  |
| 5251 | **RHD4-02-002-L06-(ST)-GRP Pipes - 600 mm diameter** |  | 2027-04-19 → 2027-04-14 (-5d) |  |
| RHD4CZ9L06ST1402 | Primary Test for GRP Pipe Line 600 mm - (RD-L-6)-Z9-L06-ST | 2027-04-17 → 2027-04-13 (-4d) | 2027-04-19 → 2027-04-14 (-5d) | -90.02d → -87d |
| 9048 | **RHD4-02-002-L06-(ST)-MH Works - 1200 mm diameter** |  | 2027-05-10 → 2027-05-05 (-5d) |  |
| RHD4CZ9L06ST3300 | MH Ring and C.Slab works and Backfilling works for MH 1200 mm - (RD-L-6)-Z9-L06-ST | 2027-04-25 → 2027-04-21 (-4d) | 2027-04-27 → 2027-04-22 (-5d) | -105.02d → -102d |
| RHD4CZ9L06ST3400 | Steel Cover for MH 1200 mm - (RD-L-6)-Z9-L06-ST | 2027-05-05 → 2027-05-02 (-3d) | 2027-05-08 → 2027-05-03 (-5d) | -112.02d → -109d |
| RHD4CZ9L06ST3500 | Finishing, Benching, Testing works for MH 1200 mm - (RD-L-6)-Z9-L06-ST | 2027-05-08 → 2027-05-04 (-4d) | 2027-05-10 → 2027-05-05 (-5d) | -112.02d → -109d |
| 9049 | **RHD4-02-002-L06-(ST)-MH Works - 1500 mm diameter** |  | 2027-05-03 → 2027-04-28 (-5d) |  |
| RHD4CZ9L06ST3401 | Steel Cover for MH 1500 mm - (RD-L-6)-Z9-L06-ST | 2027-04-25 → 2027-04-21 (-4d) | 2027-04-28 → 2027-04-24 (-4d) | -85.02d → -82d |
| RHD4CZ9L06ST3501 | Finishing, Benching, Testing works for MH 1500 mm - (RD-L-6)-Z9-L06-ST | 2027-04-28 → 2027-04-25 (-3d) | 2027-05-03 → 2027-04-28 (-5d) | -85.02d → -82d |
| 9050 | **RHD4-02-002-L06-(ST)-MH Works - 2000 mm diameter** |  | 2027-05-05 → 2027-05-01 (-4d) |  |
| RHD4CZ9L06ST3302 | MH Ring and C.Slab works and Backfilling works for MH 2000 mm - (RD-L-6)-Z9-L06-ST | 2027-04-25 → 2027-04-21 (-4d) | 2027-04-27 → 2027-04-22 (-5d) | -82.02d → -79d |
| RHD4CZ9L06ST3402 | Steel Cover for MH 2000 mm - (RD-L-6)-Z9-L06-ST | 2027-04-28 → 2027-04-25 (-3d) | 2027-05-01 → 2027-04-26 (-5d) | -83.02d → -80d |
| RHD4CZ9L06ST3502 | Finishing, Benching, Testing works for MH 2000 mm - (RD-L-6)-Z9-L06-ST | 2027-05-03 → 2027-04-29 (-4d) | 2027-05-05 → 2027-05-01 (-4d) | -85.02d → -82d |
| 9038 | **RHD4-02-002-L06-(ST)-GRP Pipes - 1000 mm diameter** |  | 2027-01-27 → 2027-01-28 (+1d) |  |
| RHD4CZ9L06ST1406 | Primary Test for GRP Pipe Line 1000 mm - (RD-L-6)-Z9-L06-ST | 2027-01-26 → 2027-01-27 (+1d) | 2027-01-27 → 2027-01-28 (+1d) | -146d → -147d |
| 9037 | **RHD4-02-002-L06-(ST)-GRP Pipes - 900 mm diameter** |  | 2027-04-17 → 2027-04-12 (-5d) |  |
| RHD4CZ9L06ST1405 | Primary Test for GRP Pipe Line 900 mm - (RD-L-6)-Z9-L06-ST | 2027-04-14 → 2027-04-11 (-3d) | 2027-04-17 → 2027-04-12 (-5d) | -94.02d → -91d |
| 9036 | **RHD4-02-002-L06-(ST)-GRP Pipes - 800 mm diameter** |  | 2027-04-17 → 2027-04-12 (-5d) |  |
| RHD4CZ9L06ST1404 | Primary Test for GRP Pipe Line 800 mm - (RD-L-6)-Z9-L06-ST | 2027-04-14 → 2027-04-11 (-3d) | 2027-04-17 → 2027-04-12 (-5d) | -112.02d → -109d |
| 9035 | **RHD4-02-002-L06-(ST)-GRP Pipes - 700 mm diameter** |  | 2027-04-19 → 2027-04-14 (-5d) |  |
| RHD4CZ9L06ST1403 | Primary Test for GRP Pipe Line 700 mm - (RD-L-6)-Z9-L06-ST | 2027-04-17 → 2027-04-13 (-4d) | 2027-04-19 → 2027-04-14 (-5d) | -112.02d → -109d |
| 9032 | **RHD4-02-002-L06-(ST)-GRP Pipes - 400 mm diameter** |  | 2027-04-21 → 2027-04-17 (-4d) |  |
| RHD4CZ9L06ST1400 | Primary Test for GRP Pipe Line 400 mm - (RD-L-6)-Z9-L06-ST | 2027-04-19 → 2027-04-15 (-4d) | 2027-04-21 → 2027-04-17 (-4d) | -112.02d → -109d |
| 9046 | **RHD4-02-002-L06-(ST)-UPVC Pipes - 300 mm diameter** |  | 2027-05-05 → 2027-05-01 (-4d) |  |
| RHD4CZ9L06ST2100 | Excavation works for UPVC Pipe Line 300 mm - (RD-L-6)-Z9-L06-ST |  | 2027-04-25 → 2027-04-20 (-5d) | -112.02d → -109d |
| RHD4CZ9L06ST2200 | Bedding works for UPVC Pipe Line 300 mm - (RD-L-6)-Z9-L06-ST |  | 2027-04-27 → 2027-04-22 (-5d) | -112.02d → -109d |
| RHD4CZ9L06ST2300 | Installing for UPVC Pipe Line 300 mm - (RD-L-6)-Z9-L06-ST |  | 2027-04-29 → 2027-04-25 (-4d) | -112.02d → -109d |
| RHD4CZ9L06ST2500 | Backfilling and warning tape works for UPVC Pipe Line 300 mm - (RD-L-6)-Z9-L06-ST |  | 2027-05-05 → 2027-05-01 (-4d) | -112.02d → -109d |
| RHD4CZ9L06ST2400 | Primary Test for UPVC Pipe Line 300 mm - (RD-L-6)-Z9-L06-ST | 2027-04-29 → 2027-04-26 (-3d) | 2027-05-02 → 2027-04-27 (-5d) | -112.02d → -109d |
| 9054 | **RHD4-02-002-L06-(ST)-Concrete Encasement** | 2027-04-27 → 2027-04-24 (-3d) | 2027-04-29 → 2027-04-25 (-4d) |  |
| RHD4CZ9L06ST6100 | Pipe Encasement for Storm Pipelines - (RD-L-6)-Z9-L06-ST | 2027-04-27 → 2027-04-24 (-3d) | 2027-04-29 → 2027-04-25 (-4d) | -110.02d → -107d |
| 9055 | **RHD4-02-002-Z9-L06-Catch Basin - ST** |  | 2027-05-19 → 2027-05-10 (-9d) |  |

| ID | Task | Start | Finish | Total float |
| --- | --- | --- | --- | --- |
| 9056 | **RHD4-02-002-L06-(ST)-Single Catch Basin Works** |  | 2027-05-19 → 2027-05-10 (-9d) |  |
| RHD4CZ9L06ST7100 | Excavation works for Single Catch Basin - (RD-L-6)-Z9-L06-ST |  | 2027-04-29 → 2027-04-25 (-4d) | -86.02d → -83d |
| RHD4CZ9L06ST7200 | PC Blinding, Installation and Pipe connection for Single Catch Basin - (RD-L-6)-Z9-L06-ST |  | 2027-05-02 → 2027-04-27 (-5d) | -86.02d → -83d |
| RHD4CZ9L06ST7300 | Rings & C.Slab & Final Backfill for Single Catch Basin - (RD-L-6)-Z9-L06-ST |  | 2027-05-05 → 2027-05-01 (-4d) | -86.02d → -83d |
| RHD4CZ9L06ST7400 | Steel Cover for Single Catch Basin - (RD-L-6)-Z9-L06-ST | 2027-05-05 → 2027-05-02 (-3d) | 2027-05-09 → 2027-05-04 (-5d) | -86.02d → -83d |
| RHD4CZ9L06ST7500 | Finishing and Insulation works for Single Catch Basin - (RD-L-6)-Z9-L06-ST | 2027-05-09 → 2027-05-05 (-4d) | 2027-05-19 → 2027-05-10 (-9d) | -86.02d → -83d |
| 9080 | **RHD4-02-002-Z9-L06-Sewage Network - SW** |  | 2027-05-27 → 2027-05-23 (-4d) |  |
| 9090 | **RHD4-02-002-L06-(SW)-MH Works - 1200 mm diameter** |  | 2027-05-27 → 2027-05-23 (-4d) |  |
| RHD4CZ9L06SW3300 | MH Ring and C.Slab works and Backfilling works for MH 1200 mm - (RD-L-6)-Z9-L06-SW | 2027-05-05 → 2027-05-02 (-3d) | 2027-05-12 → 2027-05-08 (-4d) | -86.02d → -83d |
| RHD4CZ9L06SW3400 | Steel Cover for MH 1200 mm - (RD-L-6)-Z9-L06-SW | 2027-05-12 → 2027-05-09 (-3d) | 2027-05-20 → 2027-05-11 (-9d) | -86.02d → -83d |
| RHD4CZ9L06SW3500 | Finishing, Benching, Testing works for MH 1200 mm - (RD-L-6)-Z9-L06-SW | 2027-05-20 → 2027-05-12 (-8d) | 2027-05-27 → 2027-05-23 (-4d) | -86.02d → -83d |
| 957 | **RHD4-02-002-L06-(SW)-MH Works - 1200 mm diameter with Back drop** |  | 2027-05-19 → 2027-05-10 (-9d) |  |
| RHD4CZ9L06SW3301 | MH Ring and C.Slab works and Backfilling works for MH 1200 mm - (RD-L-6)-Z9-L06-SW | 2027-05-05 → 2027-05-02 (-3d) | 2027-05-09 → 2027-05-04 (-5d) | -88.02d → -85d |
| RHD4CZ9L06SW3401 | Steel Cover for MH 1200 mm - (RD-L-6)-Z9-L06-SW | 2027-05-09 → 2027-05-05 (-4d) | 2027-05-11 → 2027-05-06 (-5d) | -88.02d → -85d |
| RHD4CZ9L06SW3501 | Finishing, Benching, Testing works for MH 1200 mm - (RD-L-6)-Z9-L06-SW | 2027-05-11 → 2027-05-08 (-3d) | 2027-05-19 → 2027-05-10 (-9d) | -88.02d → -85d |
| 9086 | **RHD4-02-002-L06-(SW)-UPVC Pipes - 200 mm diameter** |  | 2027-05-09 → 2027-05-04 (-5d) |  |
| RHD4CZ9L06SW2400 | Primary Test for UPVC Pipe Line 200 mm - (RD-L-6)-Z9-L06-SW | 2027-05-05 → 2027-05-02 (-3d) | 2027-05-09 → 2027-05-04 (-5d) | -105.02d → -102d |
| 9117 | **RHD4-02-002-Z9-L06-Potable Network - PT** | 2027-05-09 → 2027-05-05 (-4d) | 2027-06-09 → 2027-06-05 (-4d) |  |
| 9118 | **RHD4-02-002-L06-(PT)-HDPE Pipes - 110 mm diameter** | 2027-05-11 → 2027-05-08 (-3d) | 2027-05-30 → 2027-05-25 (-5d) |  |
| RHD4CZ9L06PT1100 | Excavation works for HDPE Pipline 110 mm - (RD-L-6)-Z9-L06-PT | 2027-05-11 → 2027-05-08 (-3d) | 2027-05-13 → 2027-05-09 (-4d) | -103.02d → -100d |
| RHD4CZ9L06PT1200 | Bedding works for HDPE Pipline 110 mm - (RD-L-6)-Z9-L06-PT | 2027-05-13 → 2027-05-10 (-3d) | 2027-05-20 → 2027-05-11 (-9d) | -103.02d → -100d |
| RHD4CZ9L06PT1300 | Installing for HDPE Pipline 110 mm - (RD-L-6)-Z9-L06-PT | 2027-05-22 → 2027-05-13 (-9d) | 2027-05-24 → 2027-05-19 (-5d) | -104.02d → -101d |
| RHD4CZ9L06PT1400 | Primary Test for HDPE Pipline 110 mm - (RD-L-6)-Z9-L06-PT | 2027-05-24 → 2027-05-20 (-4d) | 2027-05-26 → 2027-05-22 (-4d) | -104.02d → -101d |
| RHD4CZ9L06PT1500 | Backfilling and warning tape works for HDPE Pipline 110 mm - (RD-L-6)-Z9-L06-PT | 2027-05-27 → 2027-05-24 (-3d) | 2027-05-30 → 2027-05-25 (-5d) | -105.02d → -102d |
| 9119 | **RHD4-02-002-L06-(PT)-HDPE Pipes - 160 mm diameter** | 2027-05-09 → 2027-05-05 (-4d) | 2027-05-27 → 2027-05-23 (-4d) |  |
| RHD4CZ9L06PT1101 | Excavation works for HDPE Pipline 160 mm - (RD-L-6)-Z9-L06-PT | 2027-05-09 → 2027-05-05 (-4d) | 2027-05-11 → 2027-05-06 (-5d) | -105.02d → -102d |
| RHD4CZ9L06PT1201 | Bedding works for HDPE Pipline 160 mm - (RD-L-6)-Z9-L06-PT | 2027-05-11 → 2027-05-08 (-3d) | 2027-05-13 → 2027-05-09 (-4d) | -105.02d → -102d |
| RHD4CZ9L06PT1301 | Installing for HDPE Pipline 160 mm - (RD-L-6)-Z9-L06-PT | 2027-05-13 → 2027-05-10 (-3d) | 2027-05-22 → 2027-05-12 (-10d) | -105.02d → -102d |
| RHD4CZ9L06PT1401 | Primary Test for HDPE Pipline 160 mm - (RD-L-6)-Z9-L06-PT | 2027-05-22 → 2027-05-13 (-9d) | 2027-05-24 → 2027-05-19 (-5d) | -105.02d → -102d |
| RHD4CZ9L06PT1501 | Backfilling and warning tape works for HDPE Pipline 160 mm - (RD-L-6)-Z9-L06-PT | 2027-05-24 → 2027-05-20 (-4d) | 2027-05-27 → 2027-05-23 (-4d) | -105.02d → -102d |
| 9123 | **RHD4-02-002-L06-(PT)-Gate Valves (Direct Buried)** | 2027-05-22 → 2027-05-13 (-9d) | 2027-05-30 → 2027-05-25 (-5d) |  |
| RHD4CZ9L06PT3100 | Installation for Direct Buried Gate Valves - (RD-L-6)-Z9-L06-PT | 2027-05-22 → 2027-05-13 (-9d) | 2027-05-24 → 2027-05-19 (-5d) | -102.02d → -99d |
| RHD4CZ9L06PT3200 | Stem and Service box for Direct Buried Gate Valves - (RD-L-6)-Z9-L06-PT | 2027-05-27 → 2027-05-24 (-3d) | 2027-05-30 → 2027-05-25 (-5d) | -105.02d → -102d |
| 9128 | **RHD4-02-002-L06-(PT)-Air Valve Chambers** | 2027-05-22 → 2027-05-13 (-9d) | 2027-05-31 → 2027-05-26 (-5d) |  |
| RHD4CZ9L06PT2102 | Excavation and Bedding for Air Valve Chambers for Potable Water Network - (RD-L-6)-Z9-L06-PT | 2027-05-22 → 2027-05-13 (-9d) | 2027-05-24 → 2027-05-19 (-5d) | -102.02d → -99d |
| RHD4CZ9L06PT2202 | PC works for Air Valve Chambers for Potable Water Network - (RD-L-6)-Z9-L06-PT | 2027-05-24 → 2027-05-20 (-4d) | 2027-05-26 → 2027-05-22 (-4d) | -102.02d → -99d |
| RHD4CZ9L06PT2302 | Installation for Air Valve Chambers for Potable Water Network - (RD-L-6)-Z9-L06-PT | 2027-05-26 → 2027-05-23 (-3d) | 2027-05-29 → 2027-05-24 (-5d) | -102.02d → -99d |
| RHD4CZ9L06PT2402 | Backfilling works for Air Valve Chambers for Potable Water Network - (RD-L-6)-Z9-L06-PT | 2027-05-29 → 2027-05-25 (-4d) | 2027-05-31 → 2027-05-26 (-5d) | -102.02d → -99d |
| 9129 | **RHD4-02-002-L06-(PT)-Air Valves** | 2027-05-11 → 2027-05-08 (-3d) | 2027-05-20 → 2027-05-11 (-9d) |  |
| RHD4CZ9L06PT3103 | Installation for Air Valves for Potable Water Network - (RD-L-6)-Z9-L06-PT | 2027-05-11 → 2027-05-08 (-3d) | 2027-05-13 → 2027-05-09 (-4d) | -93.02d → -90d |
| RHD4CZ9L06PT3203 | Stem and Service box for Air Valves for Potable Water Network - (RD-L-6)-Z9-L06-PT | 2027-05-13 → 2027-05-10 (-3d) | 2027-05-20 → 2027-05-11 (-9d) | -93.02d → -90d |
| 9130 | **RHD4-02-002-L06-(PT)-Fire Hydrant** | 2027-05-27 → 2027-05-24 (-3d) | 2027-06-09 → 2027-06-05 (-4d) |  |
| RHD4CZ9L06PT4100 | Excavation and Bedding and Pipe Installation for Fire Hydrant - (RD-L-6)-Z9-L06-PT | 2027-05-27 → 2027-05-24 (-3d) | 2027-05-31 → 2027-05-26 (-5d) | -86.02d → -83d |
| RHD4CZ9L06PT4200 | Valve Installation for Fire Hydrant - (RD-L-6)-Z9-L06-PT | 2027-05-31 → 2027-05-27 (-4d) | 2027-06-02 → 2027-05-29 (-4d) | -86.02d → -83d |
| RHD4CZ9L06PT4300 | Stem for Fire Hydrant - (RD-L-6)-Z9-L06-PT | 2027-06-02 → 2027-05-30 (-3d) | 2027-06-05 → 2027-05-31 (-5d) | -86.02d → -83d |
| RHD4CZ9L06PT4400 | Fire Installation for Fire Hydrant - (RD-L-6)-Z9-L06-PT | 2027-06-05 → 2027-06-01 (-4d) | 2027-06-07 → 2027-06-02 (-5d) | -86.02d → -83d |
| RHD4CZ9L06PT4500 | Protection Barriers for Fire Hydrant - (RD-L-6)-Z9-L06-PT | 2027-06-07 → 2027-06-03 (-4d) | 2027-06-09 → 2027-06-05 (-4d) | -86.02d → -83d |
| 9132 | **RHD4-02-002-Z9-L06-Irrigation Network - IRR** | 2027-05-31 → 2027-05-27 (-4d) | 2027-06-16 → 2027-06-12 (-4d) |  |
| 9133 | **RHD4-02-002-L06-(IRR)-HDPE Pipes - 160 mm diameter** | 2027-05-31 → 2027-05-27 (-4d) | 2027-06-16 → 2027-06-12 (-4d) |  |
| RHD4CZ9L06IRR1100 | Excavation works for HDPE Pipline 160 mm - (RD-L-6)-Z9-L06-IRR | 2027-05-31 → 2027-05-27 (-4d) | 2027-06-03 → 2027-05-30 (-4d) | -102.02d → -99d |
| RHD4CZ9L06IRR1200 | Bedding works for HDPE Pipline 160 mm - (RD-L-6)-Z9-L06-IRR | 2027-06-03 → 2027-05-31 (-3d) | 2027-06-07 → 2027-06-02 (-5d) | -102.02d → -99d |
| RHD4CZ9L06IRR1300 | Installing for HDPE Pipline 160 mm - (RD-L-6)-Z9-L06-IRR | 2027-06-07 → 2027-06-03 (-4d) | 2027-06-10 → 2027-06-06 (-4d) | -102.02d → -99d |
| RHD4CZ9L06IRR1400 | Primary Test for HDPE Pipline 160 mm - (RD-L-6)-Z9-L06-IRR | 2027-06-10 → 2027-06-07 (-3d) | 2027-06-13 → 2027-06-08 (-5d) | -100.02d → -97d |
| RHD4CZ9L06IRR1500 | Backfilling and warning tape works for HDPE Pipline 160 mm - (RD-L-6)-Z9-L06-IRR | 2027-06-13 → 2027-06-09 (-4d) | 2027-06-16 → 2027-06-12 (-4d) | -100.02d → -97d |
| 9141 | **RHD4-02-002-L06-(IRR)-Gate Valves (Direct Buried)** | 2027-06-08 → 2027-06-05 (-3d) | 2027-06-13 → 2027-06-08 (-5d) |  |
| RHD4CZ9L06IRR3100 | Installation for Direct Buried Gate Valves - (RD-L-6)-Z9-L06-IRR | 2027-06-08 → 2027-06-05 (-3d) | 2027-06-10 → 2027-06-06 (-4d) | -102.02d → -99d |
| RHD4CZ9L06IRR3200 | Stem and Service box for Direct Buried Gate Valves - (RD-L-6)-Z9-L06-IRR | 2027-06-10 → 2027-06-07 (-3d) | 2027-06-13 → 2027-06-08 (-5d) | -102.02d → -99d |
| 9166 | **RHD4-02-002-Z9-L06-Medium Voltage Network - MV** | 2027-03-01 → 2027-02-23 (-6d) | 2027-04-01 → 2027-03-27 (-5d) |  |
| 9167 | **RHD4-02-002-L06-(MV)-Medium Voltage cable trench** | 2027-03-01 → 2027-02-23 (-6d) | 2027-04-01 → 2027-03-27 (-5d) |  |
| RHD4CZ9L06MV1100 | Excavation for Medium Voltage Trench - (RD-L-6)-Z9-L06-MV | 2027-03-01 → 2027-02-23 (-6d) | 2027-03-06 → 2027-02-28 (-6d) | -150d → -145d |
| RHD4CZ9L06MV1200 | Trench Backfilling for Medium Voltage Network - (RD-L-6)-Z9-L06-MV | 2027-03-28 → 2027-03-22 (-6d) | 2027-04-01 → 2027-03-27 (-5d) | -150d → -145d |
| 9168 | **RHD4-02-002-L06-(MV)-Medium Voltage duct banks** | 2027-03-01 → 2027-02-23 (-6d) | 2027-03-13 → 2027-03-03 (-10d) |  |
| RHD4CZ9L06MV2100 | Excavation of Duct Banks for Medium Voltage Network - (RD-L-6)-Z9-L06-MV | 2027-03-01 → 2027-02-23 (-6d) | 2027-03-02 → 2027-02-24 (-6d) | -154d → -149d |
| RHD4CZ9L06MV2200 | Installation of Duct Banks for Medium Voltage Network - (RD-L-6)-Z9-L06-MV | 2027-03-03 → 2027-02-25 (-6d) | 2027-03-04 → 2027-02-27 (-5d) | -154d → -149d |
| RHD4CZ9L06MV2300 | Pouring of Duct Banks for Medium Voltage Network - (RD-L-6)-Z9-L06-MV | 2027-03-06 → 2027-02-28 (-6d) | 2027-03-07 → 2027-03-01 (-6d) | -154d → -149d |
| RHD4CZ9L06MV2400 | Backfilling of Duct Banks for Medium Voltage Network - (RD-L-6)-Z9-L06-MV | 2027-03-08 → 2027-03-02 (-6d) | 2027-03-13 → 2027-03-03 (-10d) | -154d → -149d |
| 9169 | **RHD4-02-002-L06-(MV)-Medium Voltage cables 3Cx 500 mm²** | 2027-03-07 → 2027-03-01 (-6d) | 2027-03-22 → 2027-03-16 (-6d) |  |
| RHD4CZ9L06MV3100 | Installation of Medium Voltage Cables 3Cx 500 mm² - (RD-L-6)-Z9-L06-MV | 2027-03-07 → 2027-03-01 (-6d) | 2027-03-15 → 2027-03-06 (-9d) | -150d → -145d |
| RHD4CZ9L06MV3200 | Joints Installation of Medium Voltage Cables 3Cx 500 mm² - (RD-L-6)-Z9-L06-MV | 2027-03-16 → 2027-03-07 (-9d) | 2027-03-17 → 2027-03-08 (-9d) | -150d → -145d |
| RHD4CZ9L06MV3300 | Testing of Medium Voltage Cables 3Cx 500 mm² - (RD-L-6)-Z9-L06-MV | 2027-03-18 → 2027-03-13 (-5d) | 2027-03-20 → 2027-03-14 (-6d) | -150d → -145d |

| ID | Task | Start | Finish | Total float |
| --- | --- | --- | --- | --- |
| RHD4CZ9L06MV3400 | Termination of Medium Voltage Cables 3Cx 500 mm² - (RD-L-6)-Z9-L06-MV | 2027-03-21 → 2027-03-15 (-6d) | 2027-03-22 → 2027-03-16 (-6d) | -150d → -145d |
| 9170 | **RHD4-02-002-L06-(MV)-Medium Voltage cables 3Cx 50 mm²** | 2027-03-21 → 2027-03-15 (-6d) | 2027-03-22 → 2027-03-16 (-6d) |  |
| RHD4CZ9L06MV3401 | Termination of Medium Voltage Cables 3Cx 50 mm² - (RD-L-6)-Z9-L06-MV | 2027-03-21 → 2027-03-15 (-6d) | 2027-03-22 → 2027-03-16 (-6d) | -150d → -145d |
| 9171 | **RHD4-02-002-L06-(MV)-Normally open Point (Outdoor Type)** | 2027-03-23 → 2027-03-17 (-6d) | 2027-03-27 → 2027-03-21 (-6d) |  |
| RHD4CZ9L06MV4100 | Installation for Normally open Point - (RD-L-6)-Z9-L06-MV | 2027-03-23 → 2027-03-17 (-6d) | 2027-03-24 → 2027-03-18 (-6d) | -150d → -145d |
| RHD4CZ9L06MV4200 | Termination for Normally open Point - (RD-L-6)-Z9-L06-MV | 2027-03-25 → 2027-03-20 (-5d) | 2027-03-27 → 2027-03-21 (-6d) | -150d → -145d |
| 9173 | **RHD4-02-002-Z9-L06-Low Voltage Network - LV** | 2027-06-13 → 2027-06-09 (-4d) | 2027-06-23 → 2027-06-19 (-4d) |  |
| 9176 | **RHD4-02-002-L06-(LV)-Low Voltage cables** | 2027-06-13 → 2027-06-09 (-4d) | 2027-06-23 → 2027-06-19 (-4d) |  |
| RHD4CZ9L06LV3100 | Excavation for Low Voltage Cables for Low Voltage Network - (RD-L-6)-Z9-L06-LV | 2027-06-13 → 2027-06-09 (-4d) | 2027-06-16 → 2027-06-12 (-4d) | -102.02d → -99d |
| RHD4CZ9L06LV3200 | Cable Laying of Low Voltage Cables for Low Voltage Network - (RD-L-6)-Z9-L06-LV | 2027-06-16 → 2027-06-13 (-3d) | 2027-06-19 → 2027-06-14 (-5d) | -102.02d → -99d |
| RHD4CZ9L06LV3300 | Warning tape and Backfill for Low Voltage Cables for Low Voltage Network - (RD-L-6)-Z9-L06-LV | 2027-06-19 → 2027-06-15 (-4d) | 2027-06-21 → 2027-06-16 (-5d) | -102.02d → -99d |
| RHD4CZ9L06LV3400 | Testing of Low Voltage Cables for Low Voltage Network - (RD-L-6)-Z9-L06-LV | 2027-06-21 → 2027-06-17 (-4d) | 2027-06-23 → 2027-06-19 (-4d) | -102.02d → -99d |
| 9179 | **RHD4-02-002-Z9-L06-Street Lighting Network - SL** | 2027-03-14 → 2027-03-04 (-10d) | 2027-07-27 → 2027-07-22 (-5d) |  |
| 9180 | **RHD4-02-002-L06-(SL)-Street Lighting duct banks** | 2027-03-14 → 2027-03-04 (-10d) | 2027-03-22 → 2027-03-16 (-6d) |  |
| RHD4CZ9L06SL2100 | Excavation of Duct Banks for Street Lighting Network - (RD-L-6)-Z9-L06-SL | 2027-03-14 → 2027-03-04 (-10d) | 2027-03-15 → 2027-03-06 (-9d) | -154d → -149d |
| RHD4CZ9L06SL2200 | Installation of Duct Banks for Street Lighting Network - (RD-L-6)-Z9-L06-SL | 2027-03-16 → 2027-03-07 (-9d) | 2027-03-17 → 2027-03-08 (-9d) | -154d → -149d |
| RHD4CZ9L06SL2300 | Pouring of Duct Banks for Street Lighting Network - (RD-L-6)-Z9-L06-SL | 2027-03-18 → 2027-03-13 (-5d) | 2027-03-20 → 2027-03-14 (-6d) | -154d → -149d |
| RHD4CZ9L06SL2400 | Backfilling of Duct Banks for Street Lighting Network - (RD-L-6)-Z9-L06-SL | 2027-03-21 → 2027-03-15 (-6d) | 2027-03-22 → 2027-03-16 (-6d) | -154d → -149d |
| 9181 | **RHD4-02-002-L06-(SL)-Street Lighting Drawpit** | 2027-06-23 → 2027-06-20 (-3d) | 2027-06-28 → 2027-06-23 (-5d) |  |
| RHD4CZ9L06SL5100 | Excavation of Drawpit size 600x600x900mm for Street Lighting Network - (RD-L-6)-Z9-L06-SL | 2027-06-23 → 2027-06-20 (-3d) | 2027-06-26 → 2027-06-21 (-5d) | -102.02d → -99d |
| RHD4CZ9L06SL5200 | Installation of Drawpit size 600x600x900mm for Street Lighting Network - (RD-L-6)-Z9-L06-SL | 2027-06-26 → 2027-06-22 (-4d) | 2027-06-28 → 2027-06-23 (-5d) | -102.02d → -99d |
| 9182 | **RHD4-02-002-L06-(SL)-Street Lighting cables** | 2027-06-28 → 2027-06-24 (-4d) | 2027-07-12 → 2027-07-07 (-5d) |  |
| RHD4CZ9L06SL3100 | Excavation for Street Lighting Cables for Street Lighting Network - (RD-L-6)-Z9-L06-SL | 2027-06-28 → 2027-06-24 (-4d) | 2027-07-03 → 2027-06-28 (-5d) | -102.02d → -99d |
| RHD4CZ9L06SL3200 | Cable Laying of Street Lighting Cables for Street Lighting Network - (RD-L-6)-Z9-L06-SL | 2027-07-03 → 2027-06-29 (-4d) | 2027-07-06 → 2027-07-01 (-5d) | -102.02d → -99d |
| RHD4CZ9L06SL3300 | Warning tape and Backfill for Street Lighting Cables for Street Lighting Network - (RD-L-6)-Z9-L06-SL | 2027-07-06 → 2027-07-03 (-3d) | 2027-07-10 → 2027-07-05 (-5d) | -102.02d → -99d |
| RHD4CZ9L06SL3400 | Testing of Street Lighting Cables for Street Lighting Network - (RD-L-6)-Z9-L06-SL | 2027-07-10 → 2027-07-06 (-4d) | 2027-07-12 → 2027-07-07 (-5d) | -102.02d → -99d |
| 9183 | **RHD4-02-002-L06-(SL)-Street Lighting Poles** | 2027-07-12 → 2027-07-08 (-4d) | 2027-07-25 → 2027-07-20 (-5d) |  |
| RHD4CZ9L06SL1100 | Excavation for RC Base for Lighting Poles for Street Lighting Network - (RD-L-6)-Z9-L06-SL | 2027-07-12 → 2027-07-08 (-4d) | 2027-07-14 → 2027-07-10 (-4d) | -102.02d → -99d |
| RHD4CZ9L06SL1200 | Installation for RC Base for Lighting Poles for Street Lighting Network - (RD-L-6)-Z9-L06-SL | 2027-07-14 → 2027-07-11 (-3d) | 2027-07-17 → 2027-07-12 (-5d) | -102.02d → -99d |
| RHD4CZ9L06SL1300 | Backfill for RC Base for Lighting Poles for Street Lighting Network - (RD-L-6)-Z9-L06-SL | 2027-07-17 → 2027-07-13 (-4d) | 2027-07-19 → 2027-07-14 (-5d) | -102.02d → -99d |
| RHD4CZ9L06SL1400 | Installation for Lighting Poles for Street Lighting Network - (RD-L-6)-Z9-L06-SL | 2027-07-19 → 2027-07-15 (-4d) | 2027-07-22 → 2027-07-18 (-4d) | -102.02d → -99d |
| RHD4CZ9L06SL1500 | Luminaire Installation for Lighting Poles for Street Lighting Network - (RD-L-6)-Z9-L06-SL | 2027-07-22 → 2027-07-19 (-3d) | 2027-07-25 → 2027-07-20 (-5d) | -102.02d → -99d |
| 9185 | **RHD4-02-002-L06-(SL)-Street Lighting Earthing System** | 2027-07-25 → 2027-07-21 (-4d) | 2027-07-27 → 2027-07-22 (-5d) |  |
| RHD4CZ9L06SL6100 | Installation of Earthing for Lighting Poles and Fedder Pillers for Street Lighting Network - (RD-L-6)-Z9-L06-SL | 2027-07-25 → 2027-07-21 (-4d) | 2027-07-27 → 2027-07-22 (-5d) | -102.02d → -99d |
| 9191 | **RHD4-02-002-Z9-L06-Telecommunications Network - TC** | 2027-07-27 → 2027-07-24 (-3d) | 2027-08-26 → 2027-08-22 (-4d) |  |
| 9192 | **RHD4-02-002-L06-(TC)-Telecommunications Ducts** | 2027-07-27 → 2027-07-24 (-3d) | 2027-08-19 → 2027-08-15 (-4d) |  |
| RHD4CZ9L06TC2100 | Excavation of HDPE Ducts for Telecom Network - (RD-L-6)-Z9-L06-TC | 2027-07-27 → 2027-07-24 (-3d) | 2027-08-03 → 2027-07-29 (-5d) | -102.02d → -99d |
| RHD4CZ9L06TC2200 | Installation of HDPE Ducts for Telecom Network - (RD-L-6)-Z9-L06-TC | 2027-08-03 → 2027-07-31 (-3d) | 2027-08-12 → 2027-08-08 (-4d) | -102.02d → -99d |
| RHD4CZ9L06TC2400 | Backfilling of HDPE Ducts for Telecom Network - (RD-L-6)-Z9-L06-TC | 2027-08-12 → 2027-08-09 (-3d) | 2027-08-19 → 2027-08-15 (-4d) | -102.02d → -99d |
| 9193 | **RHD4-02-002-L06-(TC)-Telecommunications Manholes** | 2027-08-19 → 2027-08-16 (-3d) | 2027-08-26 → 2027-08-22 (-4d) |  |
| RHD4CZ9L06TC5100 | Excavation for Manholes for Telecom Network - (RD-L-6)-Z9-L06-TC | 2027-08-19 → 2027-08-16 (-3d) | 2027-08-23 → 2027-08-18 (-5d) | -102.02d → -99d |
| RHD4CZ9L06TC5200 | Installation of Manholes for Telecom Network - (RD-L-6)-Z9-L06-TC | 2027-08-23 → 2027-08-19 (-4d) | 2027-08-26 → 2027-08-22 (-4d) | -102.02d → -99d |
| 9195 | **RHD4-02-002-Z9-L06-Information and Communication Technologies - ICT** | 2027-08-26 → 2027-08-23 (-3d) | 2027-09-22 → 2027-09-18 (-4d) |  |
| 9196 | **RHD4-02-002-L06-(ICT)-Information and Communication Technologies Ducts** | 2027-08-26 → 2027-08-23 (-3d) | 2027-09-15 → 2027-09-11 (-4d) |  |
| RHD4CZ9L06ICT2100 | Excavation of HDPE Ducts for ICT Network - (RD-L-6)-Z9-L06-ICT | 2027-08-26 → 2027-08-23 (-3d) | 2027-09-01 → 2027-08-28 (-4d) | -102.02d → -99d |
| RHD4CZ9L06ICT2200 | Installation of HDPE Ducts for ICT Network - (RD-L-6)-Z9-L06-ICT | 2027-09-01 → 2027-08-29 (-3d) | 2027-09-09 → 2027-09-05 (-4d) | -102.02d → -99d |
| RHD4CZ9L06ICT2400 | Backfilling of HDPE Ducts for ICT Network - (RD-L-6)-Z9-L06-ICT | 2027-09-09 → 2027-09-06 (-3d) | 2027-09-15 → 2027-09-11 (-4d) | -102.02d → -99d |
| 9197 | **RHD4-02-002-L06-(ICT)-Information and Communication Technologies Manholes** | 2027-09-15 → 2027-09-12 (-3d) | 2027-09-22 → 2027-09-18 (-4d) |  |
| RHD4CZ9L06ICT5100 | Excavation for Manholes for ICT Network - (RD-L-6)-Z9-L06-ICT | 2027-09-15 → 2027-09-12 (-3d) | 2027-09-19 → 2027-09-14 (-5d) | -102.02d → -99d |
| RHD4CZ9L06ICT5200 | Installation of Manholes for ICT Network - (RD-L-6)-Z9-L06-ICT | 2027-09-19 → 2027-09-15 (-4d) | 2027-09-22 → 2027-09-18 (-4d) | -102.02d → -99d |
| 8460 | **RHD4-02-002-Z9-L02** |  | 2028-03-23 → 2028-03-19 (-4d) |  |
| 8639 | **RHD4-02-002-Z9-L02-Road Works - RD** | 2027-02-28 → 2027-02-16 (-12d) | 2028-03-23 → 2028-03-19 (-4d) |  |
| 8640 | **RHD4-02-002-L02-(RD)-Subgrade** | 2027-02-28 → 2027-02-16 (-12d) | 2027-03-15 → 2027-03-01 (-14d) |  |
| RHD4CZ9L02RD1100 | Supply, lay and compaction subgrade compacted thickness 300 mm for Roads - (RD-L-2)-Z9-L02-RD | 2027-02-28 → 2027-02-16 (-12d) | 2027-03-15 → 2027-03-01 (-14d) | -198d → -189d |
| 8641 | **RHD4-02-002-L02-(RD)-Aggregate Base Course** | 2027-03-16 → 2027-03-02 (-14d) | 2027-03-28 → 2027-03-17 (-11d) |  |
| RHD4CZ9L02RD2100 | Supply, lay and compaction Aggregate base course compacted thickness 300 mmfor Roads - (RD-L-2)-Z9-L02-RD | 2027-03-16 → 2027-03-02 (-14d) | 2027-03-28 → 2027-03-17 (-11d) | -198d → -189d |
| 8642 | **RHD4-02-002-L02-(RD)-Bituminous base course Two Layers, including (MC1)&(RC2)** | 2027-03-29 → 2027-03-24 (-5d) | 2027-12-15 → 2027-12-11 (-4d) |  |
| RHD4CZ9L02RD3100 | Supply, lay and Asphaltic base course including Prime Coat (MC1) for 1st Layer - (RD-L-2)-Z9-L02-RD | 2027-03-29 → 2027-03-24 (-5d) | 2027-03-30 → 2027-03-25 (-5d) | -198d → -194d |
| RHD4CZ9L02RD3200 | Supply, lay and Asphaltic base course including Tack Coat (RC2) for 2nd Layer - (RD-L-2)-Z9-L02-RD | 2027-12-13 → 2027-12-09 (-4d) | 2027-12-15 → 2027-12-11 (-4d) | -140.02d → -137d |
| 8644 | **RHD4-02-002-L02-(RD)-Precast Concrete Curb** | 2028-02-03 → 2028-01-30 (-4d) | 2028-02-17 → 2028-02-13 (-4d) |  |
| RHD4CZ9L02RD5100 | Supply and installation Precast Concrete Kerb for Roads - (RD-L-2)-Z9-L02-RD | 2028-02-03 → 2028-01-30 (-4d) | 2028-02-17 → 2028-02-13 (-4d) | -183d → -179d |
| 8647 | **RHD4-02-002-L02-(RD)-Traffic Signage** | 2028-02-19 → 2028-02-14 (-5d) | 2028-03-04 → 2028-02-24 (-9d) |  |
| RHD4CZ9L02RD8100 | Installation of Traffic Signage for Road Network - (RD-L-2)-Z9-L02-RD | 2028-02-19 → 2028-02-14 (-5d) | 2028-03-04 → 2028-02-24 (-9d) | -183d → -179d |
| 8645 | **RHD4-02-002-L02-(RD)-Precast Interlocking Block Pavers** | 2028-03-05 → 2028-02-26 (-8d) | 2028-03-16 → 2028-03-12 (-4d) |  |
| RHD4CZ9L02RD6100 | Interlocking block pavers for sidewalk-footpath for Side walks and Parking areas - (RD-L-2)-Z9-L02-RD | 2028-03-05 → 2028-02-26 (-8d) | 2028-03-16 → 2028-03-12 (-4d) | -183d → -179d |
| 8643 | **RHD4-02-002-L02-(RD)-Bituminous concrete wearing course including tack coat (RC2)** | 2028-03-18 → 2028-03-13 (-5d) | 2028-03-19 → 2028-03-14 (-5d) |  |
| RHD4CZ9L02RD4100 | Supply, lay and compaction Asphaltic wearing course including tack Coat (RC2)for Road Network - (RD-L-2)-Z9-L02-RD | 2028-03-18 → 2028-03-13 (-5d) | 2028-03-19 → 2028-03-14 (-5d) | -183d → -179d |
| 8646 | **RHD4-02-002-L02-(RD)-Pavement Marking** | 2028-03-20 → 2028-03-15 (-5d) | 2028-03-23 → 2028-03-19 (-4d) |  |
| RHD4CZ9L02RD7100 | Pavement Markings for Road Network - (RD-L-2)-Z9-L02-RD | 2028-03-20 → 2028-03-15 (-5d) | 2028-03-23 → 2028-03-19 (-4d) | -183d → -179d |
| 8464 | **RHD4-02-002-Z9-L02-Storm Network - ST** |  | 2027-04-21 → 2027-04-17 (-4d) |  |

| ID | Task | Start | Finish | Total float |
| --- | --- | --- | --- | --- |
| 8482 | **RHD4-02-002-L02-(ST)-MH Works - 1500 mm diameter** |  | 2027-04-21 → 2027-04-17 (-4d) |  |
| RHD4CZ9L02ST3301 | MH Ring and C.Slab works and Backfilling works for MH 1500 mm - (RD-L-2)-Z9-L02-ST |  | 2027-04-12 → 2027-04-07 (-5d) | -145.02d → -142d |
| RHD4CZ9L02ST3401 | Steel Cover for MH 1500 mm - (RD-L-2)-Z9-L02-ST | 2027-04-12 → 2027-04-08 (-4d) | 2027-04-15 → 2027-04-11 (-4d) | -145.02d → -142d |
| RHD4CZ9L02ST3501 | Finishing, Benching, Testing works for MH 1500 mm - (RD-L-2)-Z9-L02-ST | 2027-04-15 → 2027-04-12 (-3d) | 2027-04-21 → 2027-04-17 (-4d) | -145.02d → -142d |
| 8481 | **RHD4-02-002-L02-(ST)-MH Works - 1200 mm diameter** |  | 2027-04-20 → 2027-04-15 (-5d) |  |
| RHD4CZ9L02ST3300 | MH Ring and C.Slab works and Backfilling works for MH 1200 mm - (RD-L-2)-Z9-L02-ST |  | 2027-04-08 → 2027-04-04 (-4d) | -111.02d → -108d |
| RHD4CZ9L02ST3400 | Steel Cover for MH 1200 mm - (RD-L-2)-Z9-L02-ST | 2027-04-15 → 2027-04-12 (-3d) | 2027-04-18 → 2027-04-13 (-5d) | -117.02d → -114d |
| RHD4CZ9L02ST3500 | Finishing, Benching, Testing works for MH 1200 mm - (RD-L-2)-Z9-L02-ST | 2027-04-18 → 2027-04-14 (-4d) | 2027-04-20 → 2027-04-15 (-5d) | -117.02d → -114d |
| 8483 | **RHD4-02-002-L02-(ST)-MH Works - 2000 mm diameter** |  | 2027-04-14 → 2027-04-10 (-4d) |  |
| RHD4CZ9L02ST3302 | MH Ring and C.Slab works and Backfilling works for MH 2000 mm - (RD-L-2)-Z9-L02-ST | 2027-04-06 → 2027-04-03 (-3d) | 2027-04-10 → 2027-04-05 (-5d) | -136.02d → -133d |
| RHD4CZ9L02ST3402 | Steel Cover for MH 2000 mm - (RD-L-2)-Z9-L02-ST | 2027-04-10 → 2027-04-06 (-4d) | 2027-04-12 → 2027-04-07 (-5d) | -116.02d → -113d |
| RHD4CZ9L02ST3502 | Finishing, Benching, Testing works for MH 2000 mm - (RD-L-2)-Z9-L02-ST | 2027-04-12 → 2027-04-08 (-4d) | 2027-04-14 → 2027-04-10 (-4d) | -116.02d → -113d |
| 8473 | **RHD4-02-002-L02-(ST)-GRP Pipes - 1200 mm diameter** |  | 2027-04-14 → 2027-04-10 (-4d) |  |
| RHD4CZ9L02ST1408 | Primary Test for GRP Pipe Line 1200 mm - (RD-L-2)-Z9-L02-ST | 2027-04-12 → 2027-04-08 (-4d) | 2027-04-14 → 2027-04-10 (-4d) | -138.02d → -135d |
| 8472 | **RHD4-02-002-L02-(ST)-GRP Pipes - 1100 mm diameter** |  | 2027-03-14 → 2027-03-06 (-8d) |  |
| RHD4CZ9L02ST1407 | Primary Test for GRP Pipe Line 1100 mm - (RD-L-2)-Z9-L02-ST | 2027-03-08 → 2027-03-04 (-4d) | 2027-03-14 → 2027-03-06 (-8d) | -113.02d → -110d |
| 8471 | **RHD4-02-002-L02-(ST)-GRP Pipes - 1000 mm diameter** |  | 2027-03-16 → 2027-03-08 (-8d) |  |
| RHD4CZ9L02ST1406 | Primary Test for GRP Pipe Line 1000 mm - (RD-L-2)-Z9-L02-ST | 2027-03-14 → 2027-03-07 (-7d) | 2027-03-16 → 2027-03-08 (-8d) | -113.02d → -110d |
| 8470 | **RHD4-02-002-L02-(ST)-GRP Pipes - 900 mm diameter** |  | 2027-03-14 → 2027-03-06 (-8d) |  |
| RHD4CZ9L02ST1405 | Primary Test for GRP Pipe Line 900 mm - (RD-L-2)-Z9-L02-ST | 2027-03-08 → 2027-03-04 (-4d) | 2027-03-14 → 2027-03-06 (-8d) | -115.02d → -112d |
| 8469 | **RHD4-02-002-L02-(ST)-GRP Pipes - 800 mm diameter** |  | 2027-03-21 → 2027-03-16 (-5d) |  |
| RHD4CZ9L02ST1204 | Bedding works for GRP Pipe Line 800 mm - (RD-L-2)-Z9-L02-ST |  | 2027-03-14 → 2027-03-06 (-8d) | -117.02d → -114d |
| RHD4CZ9L02ST1304 | Installing for GRP Pipe Line 800 mm - (RD-L-2)-Z9-L02-ST |  | 2027-03-16 → 2027-03-08 (-8d) | -117.02d → -114d |
| RHD4CZ9L02ST1504 | Backfilling and warning tape works for GRP Pipe Line 800 mm - (RD-L-2)-Z9-L02-ST |  | 2027-03-21 → 2027-03-16 (-5d) | -117.02d → -114d |
| RHD4CZ9L02ST1404 | Primary Test for GRP Pipe Line 800 mm - (RD-L-2)-Z9-L02-ST | 2027-03-16 → 2027-03-13 (-3d) | 2027-03-18 → 2027-03-14 (-4d) | -117.02d → -114d |
| 8467 | **RHD4-02-002-L02-(ST)-GRP Pipes - 600 mm diameter** |  | 2027-03-14 → 2027-03-06 (-8d) |  |
| RHD4CZ9L02ST1302 | Installing for GRP Pipe Line 600 mm - (RD-L-2)-Z9-L02-ST |  | 2026-12-15 A → 2026-11-07 A (-38d) |  |
| RHD4CZ9L02ST1502 | Backfilling and warning tape works for GRP Pipe Line 600 mm - (RD-L-2)-Z9-L02-ST |  | 2026-12-17 A → 2026-11-08 A (-39d) |  |
| RHD4CZ9L02ST1402 | Primary Test for GRP Pipe Line 600 mm - (RD-L-2)-Z9-L02-ST | 2027-03-08 → 2027-03-04 (-4d) | 2027-03-14 → 2027-03-06 (-8d) | -96.02d → -93d |
| 8466 | **RHD4-02-002-L02-(ST)-GRP Pipes - 500 mm diameter** |  | 2027-03-16 → 2027-03-08 (-8d) |  |
| RHD4CZ9L02ST1401 | Primary Test for GRP Pipe Line 500 mm - (RD-L-2)-Z9-L02-ST | 2027-03-14 → 2027-03-07 (-7d) | 2027-03-16 → 2027-03-08 (-8d) | -96.02d → -93d |
| 8479 | **RHD4-02-002-L02-(ST)-UPVC Pipes - 300 mm diameter** |  | 2027-04-15 → 2027-04-11 (-4d) |  |
| RHD4CZ9L02ST2200 | Bedding works for UPVC Pipe Line 300 mm - (RD-L-2)-Z9-L02-ST |  | 2027-04-08 → 2027-04-04 (-4d) | -140.02d → -137d |
| RHD4CZ9L02ST2300 | Installing for UPVC Pipe Line 300 mm - (RD-L-2)-Z9-L02-ST |  | 2027-04-11 → 2027-04-06 (-5d) | -140.02d → -137d |
| RHD4CZ9L02ST2500 | Backfilling and warning tape works for UPVC Pipe Line 300 mm - (RD-L-2)-Z9-L02-ST |  | 2027-04-15 → 2027-04-11 (-4d) | -140.02d → -137d |
| RHD4CZ9L02ST2400 | Primary Test for UPVC Pipe Line 300 mm - (RD-L-2)-Z9-L02-ST | 2027-04-11 → 2027-04-07 (-4d) | 2027-04-13 → 2027-04-08 (-5d) | -140.02d → -137d |
| 8487 | **RHD4-02-002-L02-(ST)-Concrete Encasement** | 2027-04-08 → 2027-04-05 (-3d) | 2027-04-11 → 2027-04-06 (-5d) |  |
| RHD4CZ9L02ST6100 | Pipe Encasement for Storm Pipelines - (RD-L-2)-Z9-L02-ST | 2027-04-08 → 2027-04-05 (-3d) | 2027-04-11 → 2027-04-06 (-5d) | -140.02d → -137d |
| 8488 | **RHD4-02-002-Z9-L02-Catch Basin - ST** |  | 2027-05-09 → 2027-05-04 (-5d) |  |
| 8489 | **RHD4-02-002-L02-(ST)-Single Catch Basin Works** |  | 2027-05-09 → 2027-05-04 (-5d) |  |
| RHD4CZ9L02ST7200 | PC Blinding, Installation and Pipe connection for Single Catch Basin - (RD-L-2)-Z9-L02-ST |  | 2027-04-20 → 2027-04-15 (-5d) | -109.02d → -106d |
| RHD4CZ9L02ST7300 | Rings & C.Slab & Final Backfill for Single Catch Basin - (RD-L-2)-Z9-L02-ST |  | 2027-04-26 → 2027-04-21 (-5d) | -109.02d → -106d |
| RHD4CZ9L02ST7400 | Steel Cover for Single Catch Basin - (RD-L-2)-Z9-L02-ST | 2027-04-26 → 2027-04-22 (-4d) | 2027-05-01 → 2027-04-26 (-5d) | -109.02d → -106d |
| RHD4CZ9L02ST7500 | Finishing and Insulation works for Single Catch Basin - (RD-L-2)-Z9-L02-ST | 2027-05-01 → 2027-04-27 (-4d) | 2027-05-09 → 2027-05-04 (-5d) | -109.02d → -106d |
| 8513 | **RHD4-02-002-Z9-L02-Sewage Network - SW** |  | 2027-08-03 → 2027-07-26 (-8d) |  |
| 1895 | **RHD4-02-002-L02-(SW)-GRP Pipes - 500 mm diameter** | 2027-04-21 → 2027-04-18 (-3d) | 2027-05-03 → 2027-04-28 (-5d) |  |
| RHD4CZ9L02SW1102 | Excavation works for GRP Pipe Line 500 mm - (RD-L-2)-Z9-L02-SW | 2027-04-21 → 2027-04-18 (-3d) | 2027-04-24 → 2027-04-19 (-5d) | -145.02d → -142d |
| RHD4CZ9L02SW1202 | Bedding works for GRP Pipe Line 500 mm - (RD-L-2)-Z9-L02-SW | 2027-04-24 → 2027-04-20 (-4d) | 2027-04-26 → 2027-04-21 (-5d) | -126.02d → -123d |
| RHD4CZ9L02SW1302 | Installing for GRP Pipe Line 500 mm - (RD-L-2)-Z9-L02-SW | 2027-04-26 → 2027-04-22 (-4d) | 2027-04-28 → 2027-04-24 (-4d) | -126.02d → -123d |
| RHD4CZ9L02SW1402 | Primary Test for GRP Pipe Line 500 mm - (RD-L-2)-Z9-L02-SW | 2027-04-28 → 2027-04-25 (-3d) | 2027-05-01 → 2027-04-26 (-5d) | -126.02d → -123d |
| RHD4CZ9L02SW1502 | Backfilling and warning tape works for GRP Pipe Line 500 mm - (RD-L-2)-Z9-L02-SW | 2027-05-01 → 2027-04-27 (-4d) | 2027-05-03 → 2027-04-28 (-5d) | -126.02d → -123d |
| 957 | **RHD4-02-002-L02-(SW)-MH Works - 1200 mm diameter with Back drop** | 2027-05-01 → 2027-04-22 (-9d) | 2027-05-11 → 2027-05-03 (-8d) |  |
| RHD4CZ9L02SW3101 | Excavation and PC Blinding works for MH 1200 mm - (RD-L-2)-Z9-L02-SW | 2027-05-01 → 2027-04-22 (-9d) | 2027-05-02 → 2027-04-24 (-8d) | -132d → -125d |
| RHD4CZ9L02SW3201 | Installation of Base for MH 1200 mm - (RD-L-2)-Z9-L02-SW | 2027-05-03 → 2027-04-25 (-8d) | 2027-05-04 → 2027-04-26 (-8d) | -132d → -125d |
| RHD4CZ9L02SW3301 | MH Ring and C.Slab works and Backfilling works for MH 1200 mm - (RD-L-2)-Z9-L02-SW | 2027-05-05 → 2027-04-27 (-8d) | 2027-05-06 → 2027-04-28 (-8d) | -132d → -125d |
| RHD4CZ9L02SW3401 | Steel Cover for MH 1200 mm - (RD-L-2)-Z9-L02-SW | 2027-05-08 → 2027-04-29 (-9d) | 2027-05-09 → 2027-05-01 (-8d) | -132d → -125d |
| RHD4CZ9L02SW3501 | Finishing, Benching, Testing works for MH 1200 mm - (RD-L-2)-Z9-L02-SW | 2027-05-10 → 2027-05-02 (-8d) | 2027-05-11 → 2027-05-03 (-8d) | -132d → -125d |
| 8523 | **RHD4-02-002-L02-(SW)-MH Works - 1200 mm diameter** |  | 2027-08-03 → 2027-07-26 (-8d) |  |
| RHD4CZ9L02SW3100 | Excavation and PC Blinding works for MH 1200 mm - (RD-L-2)-Z9-L02-SW |  | 2027-05-24 → 2027-05-11 (-13d) | -132d → -125d |
| RHD4CZ9L02SW3200 | Installation of Base for MH 1200 mm - (RD-L-2)-Z9-L02-SW |  | 2027-06-05 → 2027-05-27 (-9d) | -110d → -103d |
| RHD4CZ9L02SW3300 | MH Ring and C.Slab works and Backfilling works for MH 1200 mm - (RD-L-2)-Z9-L02-SW | 2027-06-06 → 2027-05-29 (-8d) | 2027-06-29 → 2027-06-21 (-8d) | -110d → -103d |
| RHD4CZ9L02SW3400 | Steel Cover for MH 1200 mm - (RD-L-2)-Z9-L02-SW | 2027-06-30 → 2027-06-22 (-8d) | 2027-07-10 → 2027-07-01 (-9d) | -110d → -103d |
| RHD4CZ9L02SW3500 | Finishing, Benching, Testing works for MH 1200 mm - (RD-L-2)-Z9-L02-SW | 2027-07-11 → 2027-07-03 (-8d) | 2027-08-03 → 2027-07-26 (-8d) | -110d → -103d |
| 8519 | **RHD4-02-002-L02-(SW)-UPVC Pipes - 200 mm diameter** |  | 2027-06-03 → 2027-05-30 (-4d) |  |
| RHD4CZ9L02SW2100 | Excavation works for UPVC Pipe Line 200 mm - (RD-L-2)-Z9-L02-SW |  | 2027-04-26 → 2027-04-21 (-5d) | -145.02d → -142d |
| RHD4CZ9L02SW2200 | Bedding works for UPVC Pipe Line 200 mm - (RD-L-2)-Z9-L02-SW |  | 2027-05-04 → 2027-04-29 (-5d) | -145.02d → -142d |
| RHD4CZ9L02SW2300 | Installing for UPVC Pipe Line 200 mm - (RD-L-2)-Z9-L02-SW |  | 2027-05-19 → 2027-05-10 (-9d) | -145.02d → -142d |
| RHD4CZ9L02SW2500 | Backfilling and warning tape works for UPVC Pipe Line 200 mm - (RD-L-2)-Z9-L02-SW |  | 2027-06-03 → 2027-05-30 (-4d) | -145.02d → -142d |
| RHD4CZ9L02SW2400 | Primary Test for UPVC Pipe Line 200 mm - (RD-L-2)-Z9-L02-SW | 2027-05-19 → 2027-05-11 (-8d) | 2027-05-25 → 2027-05-20 (-5d) | -145.02d → -142d |
| 8550 | **RHD4-02-002-Z9-L02-Potable Network - PT** | 2027-05-25 → 2027-05-22 (-3d) | 2027-08-23 → 2027-08-18 (-5d) |  |

| ID | Task | Start | Finish | Total float |
| --- | --- | --- | --- | --- |
| 8552 | **RHD4-02-002-L02-(PT)-HDPE Pipes - 160 mm diameter** | 2027-05-25 → 2027-05-22 (-3d) | 2027-07-11 → 2027-07-06 (-5d) |  |
| RHD4CZ9L02PT1101 | Excavation works for HDPE Pipline 160 mm - (RD-L-2)-Z9-L02-PT | 2027-05-25 → 2027-05-22 (-3d) | 2027-06-03 → 2027-05-30 (-4d) | -141.02d → -138d |
| RHD4CZ9L02PT1201 | Bedding works for HDPE Pipline 160 mm - (RD-L-2)-Z9-L02-PT | 2027-06-03 → 2027-05-31 (-3d) | 2027-06-12 → 2027-06-07 (-5d) | -138.02d → -135d |
| RHD4CZ9L02PT1301 | Installing for HDPE Pipline 160 mm - (RD-L-2)-Z9-L02-PT | 2027-06-12 → 2027-06-08 (-4d) | 2027-06-24 → 2027-06-20 (-4d) | -138.02d → -135d |
| RHD4CZ9L02PT1401 | Primary Test for HDPE Pipline 160 mm - (RD-L-2)-Z9-L02-PT | 2027-06-24 → 2027-06-21 (-3d) | 2027-06-30 → 2027-06-26 (-4d) | -138.02d → -135d |
| RHD4CZ9L02PT1501 | Backfilling and warning tape works for HDPE Pipline 160 mm - (RD-L-2)-Z9-L02-PT | 2027-06-30 → 2027-06-27 (-3d) | 2027-07-11 → 2027-07-06 (-5d) | -138.02d → -135d |
| 6478 | **RHD4-02-002-L02-(PT)-Wash out Valve Chambers** | 2027-06-03 → 2027-05-31 (-3d) | 2027-06-29 → 2027-06-24 (-5d) |  |
| RHD4CZ9L02PT2101 | Excavation and Bedding for Wash out Valve Chambers for Potable Water Network - (RD-L-2)-Z9-L02-PT | 2027-06-03 → 2027-05-31 (-3d) | 2027-06-06 → 2027-06-01 (-5d) | -121.02d → -118d |
| RHD4CZ9L02PT2201 | PC works for Wash out Valve Chambers for Potable Water Network - (RD-L-2)-Z9-L02-PT | 2027-06-06 → 2027-06-02 (-4d) | 2027-06-08 → 2027-06-03 (-5d) | -121.02d → -118d |
| RHD4CZ9L02PT2301 | Installation for Wash out Valve Chambers for Potable Water Network - (RD-L-2)-Z9-L02-PT | 2027-06-08 → 2027-06-05 (-3d) | 2027-06-10 → 2027-06-06 (-4d) | -121.02d → -118d |
| RHD4CZ9L02PT2401 | Backfilling works for Wash out Valve Chambers for Potable Water Network - (RD-L-2)-Z9-L02-PT | 2027-06-27 → 2027-06-23 (-4d) | 2027-06-29 → 2027-06-24 (-5d) | -135.02d → -132d |
| 6479 | **RHD4-02-002-L02-(PT)-Wash out Valves** | 2027-06-24 → 2027-06-21 (-3d) | 2027-07-01 → 2027-06-27 (-4d) |  |
| RHD4CZ9L02PT3102 | Installation for Wash out Valves for Potable Water Network - (RD-L-2)-Z9-L02-PT | 2027-06-24 → 2027-06-21 (-3d) | 2027-06-27 → 2027-06-22 (-5d) | -133.02d → -130d |
| RHD4CZ9L02PT3202 | Stem and Service box for Wash out Valves for Potable Water Network - (RD-L-2)-Z9-L02-PT | 2027-06-29 → 2027-06-26 (-3d) | 2027-07-01 → 2027-06-27 (-4d) | -135.02d → -132d |
| 6483 | **RHD4-02-002-L02-(PT)-Concrete Encasement** | 2027-06-24 → 2027-06-21 (-3d) | 2027-06-27 → 2027-06-22 (-5d) |  |
| RHD4CZ9L02PT5100 | Pipe Encasement for Potable Pipelines - (RD-L-2)-Z9-L02-PT | 2027-06-24 → 2027-06-21 (-3d) | 2027-06-27 → 2027-06-22 (-5d) | -135.02d → -132d |
| 8551 | **RHD4-02-002-L02-(PT)-HDPE Pipes - 110 mm diameter** | 2027-05-25 → 2027-05-22 (-3d) | 2027-07-05 → 2027-06-30 (-5d) |  |
| RHD4CZ9L02PT1100 | Excavation works for HDPE Pipline 110 mm - (RD-L-2)-Z9-L02-PT | 2027-05-25 → 2027-05-22 (-3d) | 2027-05-27 → 2027-05-23 (-4d) | -141.02d → -138d |
| RHD4CZ9L02PT1200 | Bedding works for HDPE Pipline 110 mm - (RD-L-2)-Z9-L02-PT | 2027-06-12 → 2027-06-08 (-4d) | 2027-06-14 → 2027-06-09 (-5d) | -132.02d → -129d |
| RHD4CZ9L02PT1300 | Installing for HDPE Pipline 110 mm - (RD-L-2)-Z9-L02-PT | 2027-06-14 → 2027-06-10 (-4d) | 2027-06-16 → 2027-06-12 (-4d) | -132.02d → -129d |
| RHD4CZ9L02PT1400 | Primary Test for HDPE Pipline 110 mm - (RD-L-2)-Z9-L02-PT | 2027-06-30 → 2027-06-27 (-3d) | 2027-07-03 → 2027-06-28 (-5d) | -133.02d → -130d |
| RHD4CZ9L02PT1500 | Backfilling and warning tape works for HDPE Pipline 110 mm - (RD-L-2)-Z9-L02-PT | 2027-07-03 → 2027-06-29 (-4d) | 2027-07-05 → 2027-06-30 (-5d) | -133.02d → -130d |
| 8556 | **RHD4-02-002-L02-(PT)-Gate Valves (Direct Buried)** | 2027-06-17 → 2027-06-14 (-3d) | 2027-07-01 → 2027-06-27 (-4d) |  |
| RHD4CZ9L02PT3100 | Installation for Direct Buried Gate Valves - (RD-L-2)-Z9-L02-PT | 2027-06-17 → 2027-06-14 (-3d) | 2027-06-24 → 2027-06-20 (-4d) | -135.02d → -132d |
| RHD4CZ9L02PT3200 | Stem and Service box for Direct Buried Gate Valves - (RD-L-2)-Z9-L02-PT | 2027-06-24 → 2027-06-21 (-3d) | 2027-07-01 → 2027-06-27 (-4d) | -135.02d → -132d |
| 8561 | **RHD4-02-002-L02-(PT)-Air Valve Chambers** | 2027-05-27 → 2027-05-24 (-3d) | 2027-06-06 → 2027-06-01 (-5d) |  |
| RHD4CZ9L02PT2102 | Excavation and Bedding for Air Valve Chambers for Potable Water Network - (RD-L-2)-Z9-L02-PT | 2027-05-27 → 2027-05-24 (-3d) | 2027-05-30 → 2027-05-25 (-5d) | -141.02d → -138d |
| RHD4CZ9L02PT2202 | PC works for Air Valve Chambers for Potable Water Network - (RD-L-2)-Z9-L02-PT | 2027-05-30 → 2027-05-26 (-4d) | 2027-06-01 → 2027-05-27 (-5d) | -141.02d → -138d |
| RHD4CZ9L02PT2302 | Installation for Air Valve Chambers for Potable Water Network - (RD-L-2)-Z9-L02-PT | 2027-06-01 → 2027-05-29 (-3d) | 2027-06-03 → 2027-05-30 (-4d) | -141.02d → -138d |
| RHD4CZ9L02PT2402 | Backfilling works for Air Valve Chambers for Potable Water Network - (RD-L-2)-Z9-L02-PT | 2027-06-03 → 2027-05-31 (-3d) | 2027-06-06 → 2027-06-01 (-5d) | -141.02d → -138d |
| 8562 | **RHD4-02-002-L02-(PT)-Air Valves** | 2027-06-03 → 2027-05-31 (-3d) | 2027-06-08 → 2027-06-03 (-5d) |  |
| RHD4CZ9L02PT3103 | Installation for Air Valves for Potable Water Network - (RD-L-2)-Z9-L02-PT | 2027-06-03 → 2027-05-31 (-3d) | 2027-06-06 → 2027-06-01 (-5d) | -138.02d → -135d |
| RHD4CZ9L02PT3203 | Stem and Service box for Air Valves for Potable Water Network - (RD-L-2)-Z9-L02-PT | 2027-06-06 → 2027-06-02 (-4d) | 2027-06-08 → 2027-06-03 (-5d) | -138.02d → -135d |
| 8563 | **RHD4-02-002-L02-(PT)-Fire Hydrant** | 2027-07-11 → 2027-07-07 (-4d) | 2027-08-23 → 2027-08-18 (-5d) |  |
| RHD4CZ9L02PT4100 | Excavation and Bedding and Pipe Installation for Fire Hydrant - (RD-L-2)-Z9-L02-PT | 2027-07-11 → 2027-07-07 (-4d) | 2027-07-24 → 2027-07-19 (-5d) | -138.02d → -135d |
| RHD4CZ9L02PT4200 | Valve Installation for Fire Hydrant - (RD-L-2)-Z9-L02-PT | 2027-07-24 → 2027-07-20 (-4d) | 2027-08-01 → 2027-07-27 (-5d) | -138.02d → -135d |
| RHD4CZ9L02PT4300 | Stem for Fire Hydrant - (RD-L-2)-Z9-L02-PT | 2027-08-01 → 2027-07-28 (-4d) | 2027-08-09 → 2027-08-04 (-5d) | -138.02d → -135d |
| RHD4CZ9L02PT4400 | Fire Installation for Fire Hydrant - (RD-L-2)-Z9-L02-PT | 2027-08-09 → 2027-08-05 (-4d) | 2027-08-17 → 2027-08-12 (-5d) | -138.02d → -135d |
| RHD4CZ9L02PT4500 | Protection Barriers for Fire Hydrant - (RD-L-2)-Z9-L02-PT | 2027-08-17 → 2027-08-14 (-3d) | 2027-08-23 → 2027-08-18 (-5d) | -138.02d → -135d |
| 8565 | **RHD4-02-002-Z9-L02-Irrigation Network - IRR** | 2027-06-03 → 2027-05-31 (-3d) | 2027-09-16 → 2027-09-20 (+4d) |  |
| 8566 | **RHD4-02-002-L02-(IRR)-HDPE Pipes - 160 mm diameter** | 2027-06-07 → 2027-06-03 (-4d) | 2027-09-16 → 2027-09-20 (+4d) |  |
| RHD4CZ9L02IRR1100 | Excavation works for HDPE Pipline 160 mm - (RD-L-2)-Z9-L02-IRR | 2027-06-07 → 2027-06-03 (-4d) | 2027-06-21 → 2027-06-16 (-5d) | -139.02d → -136d |
| RHD4CZ9L02IRR1200 | Bedding works for HDPE Pipline 160 mm - (RD-L-2)-Z9-L02-IRR | 2027-06-21 → 2027-06-17 (-4d) | 2027-07-01 → 2027-06-27 (-4d) | -138.02d → -135d |
| RHD4CZ9L02IRR1300 | Installing for HDPE Pipline 160 mm - (RD-L-2)-Z9-L02-IRR | 2027-08-19 → 2027-08-23 (+4d) | 2027-09-01 → 2027-09-05 (+4d) | -180d → -183d |
| RHD4CZ9L02IRR1400 | Primary Test for HDPE Pipline 160 mm - (RD-L-2)-Z9-L02-IRR | 2027-09-02 → 2027-09-06 (+4d) | 2027-09-06 → 2027-09-09 (+3d) | -180d → -183d |
| RHD4CZ9L02IRR1500 | Backfilling and warning tape works for HDPE Pipline 160 mm - (RD-L-2)-Z9-L02-IRR | 2027-09-07 → 2027-09-11 (+4d) | 2027-09-16 → 2027-09-20 (+4d) | -180d → -183d |
| 6116 | **RHD4-02-002-L02-(IRR)-Butterfly Valve Chamber** | 2027-06-07 → 2027-06-03 (-4d) | 2027-06-16 → 2027-06-12 (-4d) |  |
| RHD4CZ9L02IRR2100 | Excavation and Bedding for Butterfly Valve Chamber for Irrigation Network - (RD-L-2)-Z9-L02-IRR | 2027-06-07 → 2027-06-03 (-4d) | 2027-06-09 → 2027-06-05 (-4d) | -136.02d → -133d |
| RHD4CZ9L02IRR2200 | PC works for Butterfly Valve Chamber for Irrigation Network - (RD-L-2)-Z9-L02-IRR | 2027-06-09 → 2027-06-06 (-3d) | 2027-06-12 → 2027-06-07 (-5d) | -136.02d → -133d |
| RHD4CZ9L02IRR2300 | Installation for Butterfly Valve Chamber for Irrigation Network - (RD-L-2)-Z9-L02-IRR | 2027-06-12 → 2027-06-08 (-4d) | 2027-06-14 → 2027-06-09 (-5d) | -136.02d → -133d |
| RHD4CZ9L02IRR2400 | Backfilling works for Butterfly Valve Chamber for Irrigation Network - (RD-L-2)-Z9-L02-IRR | 2027-06-14 → 2027-06-10 (-4d) | 2027-06-16 → 2027-06-12 (-4d) | -136.02d → -133d |
| 8573 | **RHD4-02-002-L02-(IRR)-HDPE Pipes - 500 mm diameter** | 2027-06-03 → 2027-05-31 (-3d) | 2027-06-17 → 2027-06-13 (-4d) |  |
| RHD4CZ9L02IRR1107 | Excavation works for HDPE Pipline 500 mm - (RD-L-2)-Z9-L02-IRR | 2027-06-03 → 2027-05-31 (-3d) | 2027-06-07 → 2027-06-02 (-5d) | -139.02d → -136d |
| RHD4CZ9L02IRR1207 | Bedding works for HDPE Pipline 500 mm - (RD-L-2)-Z9-L02-IRR | 2027-06-07 → 2027-06-03 (-4d) | 2027-06-09 → 2027-06-05 (-4d) | -134.02d → -131d |
| RHD4CZ9L02IRR1307 | Installing for HDPE Pipline 500 mm - (RD-L-2)-Z9-L02-IRR | 2027-06-09 → 2027-06-06 (-3d) | 2027-06-13 → 2027-06-08 (-5d) | -134.02d → -131d |
| RHD4CZ9L02IRR1407 | Primary Test for HDPE Pipline 500 mm - (RD-L-2)-Z9-L02-IRR | 2027-06-13 → 2027-06-09 (-4d) | 2027-06-15 → 2027-06-10 (-5d) | -134.02d → -131d |
| RHD4CZ9L02IRR1507 | Backfilling and warning tape works for HDPE Pipline 500 mm - (RD-L-2)-Z9-L02-IRR | 2027-06-15 → 2027-06-12 (-3d) | 2027-06-17 → 2027-06-13 (-4d) | -134.02d → -131d |
| 8574 | **RHD4-02-002-L02-(IRR)-Gate Valves (Direct Buried)** | 2027-08-25 → 2027-08-29 (+4d) | 2027-09-09 → 2027-09-13 (+4d) |  |
| RHD4CZ9L02IRR3100 | Installation for Direct Buried Gate Valves - (RD-L-2)-Z9-L02-IRR | 2027-08-25 → 2027-08-29 (+4d) | 2027-09-01 → 2027-09-05 (+4d) | -178d → -181d |
| RHD4CZ9L02IRR3200 | Stem and Service box for Direct Buried Gate Valves - (RD-L-2)-Z9-L02-IRR | 2027-09-02 → 2027-09-06 (+4d) | 2027-09-09 → 2027-09-13 (+4d) | -178d → -181d |
| 8577 | **RHD4-02-002-L02-(IRR)-Wash out Chamber** | 2027-06-21 → 2027-06-17 (-4d) | 2027-07-05 → 2027-06-30 (-5d) |  |
| RHD4CZ9L02IRR2101 | Excavation and Bedding for Wash out Chamber for Irrigation Network - (RD-L-2)-Z9-L02-IRR | 2027-06-21 → 2027-06-17 (-4d) | 2027-06-24 → 2027-06-20 (-4d) | -138.02d → -135d |
| RHD4CZ9L02IRR2201 | PC works for Wash out Chamber for Irrigation Network - (RD-L-2)-Z9-L02-IRR | 2027-06-24 → 2027-06-21 (-3d) | 2027-06-28 → 2027-06-23 (-5d) | -138.02d → -135d |
| RHD4CZ9L02IRR2301 | Installation for Wash out Chamber for Irrigation Network - (RD-L-2)-Z9-L02-IRR | 2027-06-28 → 2027-06-24 (-4d) | 2027-07-01 → 2027-06-27 (-4d) | -138.02d → -135d |
| RHD4CZ9L02IRR2401 | Backfilling works for Wash out Chamber for Irrigation Network - (RD-L-2)-Z9-L02-IRR | 2027-07-01 → 2027-06-28 (-3d) | 2027-07-05 → 2027-06-30 (-5d) | -138.02d → -135d |
| 8578 | **RHD4-02-002-L02-(IRR)-Wash out Valves** | 2027-06-07 → 2027-06-03 (-4d) | 2027-06-14 → 2027-06-09 (-5d) |  |
| RHD4CZ9L02IRR3102 | Installation for Wash out Valve for Irrigation Network - (RD-L-2)-Z9-L02-IRR | 2027-06-07 → 2027-06-03 (-4d) | 2027-06-10 → 2027-06-06 (-4d) | -136.02d → -133d |
| RHD4CZ9L02IRR3202 | Stem and Service box for Wash out Valve for Irrigation Network - (RD-L-2)-Z9-L02-IRR | 2027-06-10 → 2027-06-07 (-3d) | 2027-06-14 → 2027-06-09 (-5d) | -136.02d → -133d |
| 8579 | **RHD4-02-002-L02-(IRR)-Air Valve Chamber** | 2027-06-21 → 2027-06-17 (-4d) | 2027-06-30 → 2027-06-26 (-4d) |  |
| RHD4CZ9L02IRR2102 | Excavation and Bedding for Valve Chamber for Irrigation Network - (RD-L-2)-Z9-L02-IRR | 2027-06-21 → 2027-06-17 (-4d) | 2027-06-23 → 2027-06-19 (-4d) | -139.02d → -136d |

| ID | Task | Start | Finish | Total float |
| --- | --- | --- | --- | --- |
| RHD4CZ9L02IRR2202 | PC works for Valve Chamber for Irrigation Network - (RD-L-2)-Z9-L02-IRR | 2027-06-23 → 2027-06-20 (-3d) | 2027-06-26 → 2027-06-21 (-5d) | -139.02d → -136d |
| RHD4CZ9L02IRR2302 | Installation for Valve Chamber for Irrigation Network - (RD-L-2)-Z9-L02-IRR | 2027-06-26 → 2027-06-22 (-4d) | 2027-06-28 → 2027-06-23 (-5d) | -139.02d → -136d |
| RHD4CZ9L02IRR2402 | Backfilling works for Valve Chamber for Irrigation Network - (RD-L-2)-Z9-L02-IRR | 2027-06-28 → 2027-06-24 (-4d) | 2027-06-30 → 2027-06-26 (-4d) | -139.02d → -136d |
| 8580 | **RHD4-02-002-L02-(IRR)-Air Valves** | 2027-06-07 → 2027-06-03 (-4d) | 2027-07-03 → 2027-06-28 (-5d) |  |
| RHD4CZ9L02IRR3103 | Installation for Air Valves for Irrigation Network - (RD-L-2)-Z9-L02-IRR | 2027-06-07 → 2027-06-03 (-4d) | 2027-06-09 → 2027-06-05 (-4d) | -136.02d → -133d |
| RHD4CZ9L02IRR3203 | Stem and Service box for Air Valves for Irrigation Network - (RD-L-2)-Z9-L02-IRR | 2027-06-30 → 2027-06-27 (-3d) | 2027-07-03 → 2027-06-28 (-5d) | -139.02d → -136d |
| 6117 | **RHD4-02-002-L02-(IRR)-Butterfly Valves** | 2027-06-12 → 2027-06-08 (-4d) | 2027-06-16 → 2027-06-12 (-4d) |  |
| RHD4CZ9L02IRR3101 | Installation for Butterfly Valves for Irrigation Network - (RD-L-2)-Z9-L02-IRR | 2027-06-12 → 2027-06-08 (-4d) | 2027-06-14 → 2027-06-09 (-5d) | -136.02d → -133d |
| RHD4CZ9L02IRR3201 | Stem and Service box for Butterfly Valves for Irrigation Network - (RD-L-2)-Z9-L02-IRR | 2027-06-14 → 2027-06-10 (-4d) | 2027-06-16 → 2027-06-12 (-4d) | -136.02d → -133d |
| 8599 | **RHD4-02-002-Z9-L02-Medium Voltage Network - MV** | 2027-07-06 → 2027-07-04 (-2d) | 2027-09-01 → 2027-08-29 (-3d) |  |
| 8600 | **RHD4-02-002-L02-(MV)-Medium Voltage cable trench** | 2027-07-06 → 2027-07-04 (-2d) | 2027-08-24 → 2027-08-21 (-3d) |  |
| RHD4CZ9L02MV1100 | Excavation for Medium Voltage Trench - (RD-L-2)-Z9-L02-MV | 2027-07-06 → 2027-07-04 (-2d) | 2027-07-17 → 2027-07-13 (-4d) | -89.02d → -87d |
| RHD4CZ9L02MV1200 | Trench Backfilling for Medium Voltage Network - (RD-L-2)-Z9-L02-MV | 2027-08-14 → 2027-08-11 (-3d) | 2027-08-24 → 2027-08-21 (-3d) | -78.02d → -76d |
| 8601 | **RHD4-02-002-L02-(MV)-Medium Voltage duct banks** | 2027-07-17 → 2027-07-14 (-3d) | 2027-08-10 → 2027-08-07 (-3d) |  |
| RHD4CZ9L02MV2100 | Excavation of Duct Banks for Medium Voltage Network - (RD-L-2)-Z9-L02-MV | 2027-07-17 → 2027-07-14 (-3d) | 2027-07-22 → 2027-07-19 (-3d) | -80.02d → -78d |
| RHD4CZ9L02MV2200 | Installation of Duct Banks for Medium Voltage Network - (RD-L-2)-Z9-L02-MV | 2027-07-22 → 2027-07-20 (-2d) | 2027-07-31 → 2027-07-27 (-4d) | -80.02d → -78d |
| RHD4CZ9L02MV2300 | Pouring of Duct Banks for Medium Voltage Network - (RD-L-2)-Z9-L02-MV | 2027-07-31 → 2027-07-28 (-3d) | 2027-08-05 → 2027-08-02 (-3d) | -80.02d → -78d |
| RHD4CZ9L02MV2400 | Backfilling of Duct Banks for Medium Voltage Network - (RD-L-2)-Z9-L02-MV | 2027-08-05 → 2027-08-03 (-2d) | 2027-08-10 → 2027-08-07 (-3d) | -80.02d → -78d |
| 8602 | **RHD4-02-002-L02-(MV)-Medium Voltage cables 3Cx 500 mm²** | 2027-07-17 → 2027-07-14 (-3d) | 2027-08-14 → 2027-08-10 (-4d) |  |
| RHD4CZ9L02MV3100 | Installation of Medium Voltage Cables 3Cx 500 mm² - (RD-L-2)-Z9-L02-MV | 2027-07-17 → 2027-07-14 (-3d) | 2027-07-27 → 2027-07-24 (-3d) | -78.02d → -76d |
| RHD4CZ9L02MV3200 | Joints Installation of Medium Voltage Cables 3Cx 500 mm² - (RD-L-2)-Z9-L02-MV | 2027-07-27 → 2027-07-25 (-2d) | 2027-08-01 → 2027-07-28 (-4d) | -78.02d → -76d |
| RHD4CZ9L02MV3300 | Testing of Medium Voltage Cables 3Cx 500 mm² - (RD-L-2)-Z9-L02-MV | 2027-08-01 → 2027-07-29 (-3d) | 2027-08-11 → 2027-08-08 (-3d) | -78.02d → -76d |
| RHD4CZ9L02MV3400 | Termination of Medium Voltage Cables 3Cx 500 mm² - (RD-L-2)-Z9-L02-MV | 2027-08-11 → 2027-08-09 (-2d) | 2027-08-14 → 2027-08-10 (-4d) | -78.02d → -76d |
| 8603 | **RHD4-02-002-L02-(MV)-Medium Voltage cables 3Cx 50 mm²** | 2027-07-17 → 2027-07-14 (-3d) | 2027-07-25 → 2027-07-21 (-4d) |  |
| RHD4CZ9L02MV3101 | Installation of Medium Voltage Cables 3Cx 50 mm² - (RD-L-2)-Z9-L02-MV | 2027-07-17 → 2027-07-14 (-3d) | 2027-07-19 → 2027-07-15 (-4d) | -89.02d → -87d |
| RHD4CZ9L02MV3301 | Testing of Medium Voltage Cables 3Cx 50 mm² - (RD-L-2)-Z9-L02-MV | 2027-07-19 → 2027-07-17 (-2d) | 2027-07-21 → 2027-07-18 (-3d) | -89.02d → -87d |
| RHD4CZ9L02MV3401 | Termination of Medium Voltage Cables 3Cx 50 mm² - (RD-L-2)-Z9-L02-MV | 2027-07-21 → 2027-07-19 (-2d) | 2027-07-25 → 2027-07-21 (-4d) | -89.02d → -87d |
| 8604 | **RHD4-02-002-L02-(MV)-Normally open Point (Outdoor Type)** | 2027-08-24 → 2027-08-22 (-2d) | 2027-08-29 → 2027-08-25 (-4d) |  |
| RHD4CZ9L02MV4100 | Installation for Normally open Point - (RD-L-2)-Z9-L02-MV | 2027-08-24 → 2027-08-22 (-2d) | 2027-08-26 → 2027-08-23 (-3d) | -78.02d → -76d |
| RHD4CZ9L02MV4200 | Termination for Normally open Point - (RD-L-2)-Z9-L02-MV | 2027-08-26 → 2027-08-24 (-2d) | 2027-08-29 → 2027-08-25 (-4d) | -78.02d → -76d |
| 8605 | **RHD4-02-002-L02-(MV)-Unit Substations** | 2027-07-25 → 2027-07-22 (-3d) | 2027-09-01 → 2027-08-29 (-3d) |  |
| RHD4CZ9L02MV5100 | Excavation for Unit Substations for Medium Voltage Network - (RD-L-2)-Z9-L02-MV | 2027-07-25 → 2027-07-22 (-3d) | 2027-07-31 → 2027-07-27 (-4d) | -89.02d → -87d |
| RHD4CZ9L02MV5200 | Concrete Base Placement for Unit Substations for Medium Voltage Network - (RD-L-2)-Z9-L02-MV | 2027-07-31 → 2027-07-28 (-3d) | 2027-08-05 → 2027-08-02 (-3d) | -89.02d → -87d |
| RHD4CZ9L02MV5300 | Installation for Fences and doors for Medium Voltage Network - (RD-L-2)-Z9-L02-MV | 2027-08-05 → 2027-08-03 (-2d) | 2027-08-21 → 2027-08-17 (-4d) | -89.02d → -87d |
| RHD4CZ9L02MV5400 | Installation for Unit Substations for Medium Voltage Network - (RD-L-2)-Z9-L02-MV | 2027-08-21 → 2027-08-18 (-3d) | 2027-09-01 → 2027-08-29 (-3d) | -89.02d → -87d |
| 8606 | **RHD4-02-002-Z9-L02-Low Voltage Network - LV** | 2027-06-06 → 2027-06-02 (-4d) | 2027-07-26 → 2027-07-21 (-5d) |  |
| 8607 | **RHD4-02-002-L02-(LV)-Low Voltage duct banks** | 2027-06-06 → 2027-06-02 (-4d) | 2027-06-30 → 2027-06-26 (-4d) |  |
| RHD4CZ9L02LV2100 | Excavation of Duct Banks for Low Voltage Network - (RD-L-2)-Z9-L02-LV | 2027-06-06 → 2027-06-02 (-4d) | 2027-06-12 → 2027-06-07 (-5d) | -141.02d → -138d |
| RHD4CZ9L02LV2200 | Installation of Duct Banks for Low Voltage Network - (RD-L-2)-Z9-L02-LV | 2027-06-12 → 2027-06-08 (-4d) | 2027-06-20 → 2027-06-15 (-5d) | -141.02d → -138d |
| RHD4CZ9L02LV2300 | Pouring of Duct Banks for Low Voltage Network - (RD-L-2)-Z9-L02-LV | 2027-06-20 → 2027-06-16 (-4d) | 2027-06-26 → 2027-06-21 (-5d) | -141.02d → -138d |
| RHD4CZ9L02LV2400 | Backfilling of Duct Banks for Low Voltage Network - (RD-L-2)-Z9-L02-LV | 2027-06-26 → 2027-06-22 (-4d) | 2027-06-30 → 2027-06-26 (-4d) | -141.02d → -138d |
| 8608 | **RHD4-02-002-L02-(LV)-Low Voltage Drawpit** | 2027-06-26 → 2027-06-22 (-4d) | 2027-06-30 → 2027-06-26 (-4d) |  |
| RHD4CZ9L02LV5100 | Excavation of Drawpit size 900x900x1000mm for Low Voltage Network - (RD-L-2)-Z9-L02-LV | 2027-06-26 → 2027-06-22 (-4d) | 2027-06-28 → 2027-06-23 (-5d) | -141.02d → -138d |
| RHD4CZ9L02LV5200 | Installation of Drawpit size 900x900x1000mm for Low Voltage Network - (RD-L-2)-Z9-L02-LV | 2027-06-28 → 2027-06-24 (-4d) | 2027-06-30 → 2027-06-26 (-4d) | -141.02d → -138d |
| 8609 | **RHD4-02-002-L02-(LV)-Low Voltage cables** | 2027-06-30 → 2027-06-27 (-3d) | 2027-07-17 → 2027-07-12 (-5d) |  |
| RHD4CZ9L02LV3100 | Excavation for Low Voltage Cables for Low Voltage Network - (RD-L-2)-Z9-L02-LV | 2027-06-30 → 2027-06-27 (-3d) | 2027-07-05 → 2027-06-30 (-5d) | -141.02d → -138d |
| RHD4CZ9L02LV3200 | Cable Laying of Low Voltage Cables for Low Voltage Network - (RD-L-2)-Z9-L02-LV | 2027-07-05 → 2027-07-01 (-4d) | 2027-07-10 → 2027-07-05 (-5d) | -141.02d → -138d |
| RHD4CZ9L02LV3300 | Warning tape and Backfill for Low Voltage Cables for Low Voltage Network - (RD-L-2)-Z9-L02-LV | 2027-07-10 → 2027-07-06 (-4d) | 2027-07-14 → 2027-07-10 (-4d) | -141.02d → -138d |
| RHD4CZ9L02LV3400 | Testing of Low Voltage Cables for Low Voltage Network - (RD-L-2)-Z9-L02-LV | 2027-07-14 → 2027-07-11 (-3d) | 2027-07-17 → 2027-07-12 (-5d) | -141.02d → -138d |
| 8610 | **RHD4-02-002-L02-(LV)-Low Voltage Distribution Pillars** | 2027-07-17 → 2027-07-13 (-4d) | 2027-07-26 → 2027-07-21 (-5d) |  |
| RHD4CZ9L02LV4100 | Leveling for Distribution Pillars for Low Voltage Network - (RD-L-2)-Z9-L02-LV | 2027-07-17 → 2027-07-13 (-4d) | 2027-07-20 → 2027-07-15 (-5d) | -141.02d → -138d |
| RHD4CZ9L02LV4200 | Lean Concrete for Distribution Pillars for Low Voltage Network - (RD-L-2)-Z9-L02-LV | 2027-07-20 → 2027-07-17 (-3d) | 2027-07-22 → 2027-07-18 (-4d) | -141.02d → -138d |
| RHD4CZ9L02LV4300 | Installation of Distribution Pillars for Low Voltage Network - (RD-L-2)-Z9-L02-LV | 2027-07-22 → 2027-07-19 (-3d) | 2027-07-26 → 2027-07-21 (-5d) | -141.02d → -138d |
| 8612 | **RHD4-02-002-Z9-L02-Street Lighting Network - SL** | 2027-06-12 → 2027-06-08 (-4d) | 2027-11-28 → 2027-11-23 (-5d) |  |
| 8613 | **RHD4-02-002-L02-(SL)-Street Lighting duct banks** | 2027-06-12 → 2027-06-08 (-4d) | 2027-07-21 → 2027-07-17 (-4d) |  |
| RHD4CZ9L02SL2100 | Excavation of Duct Banks for Street Lighting Network - (RD-L-2)-Z9-L02-SL | 2027-06-12 → 2027-06-08 (-4d) | 2027-06-21 → 2027-06-16 (-5d) | -137.02d → -134d |
| RHD4CZ9L02SL2200 | Installation of Duct Banks for Street Lighting Network - (RD-L-2)-Z9-L02-SL | 2027-06-21 → 2027-06-17 (-4d) | 2027-07-05 → 2027-06-30 (-5d) | -137.02d → -134d |
| RHD4CZ9L02SL2300 | Pouring of Duct Banks for Street Lighting Network - (RD-L-2)-Z9-L02-SL | 2027-07-05 → 2027-07-01 (-4d) | 2027-07-14 → 2027-07-10 (-4d) | -137.02d → -134d |
| RHD4CZ9L02SL2400 | Backfilling of Duct Banks for Street Lighting Network - (RD-L-2)-Z9-L02-SL | 2027-07-14 → 2027-07-11 (-3d) | 2027-07-21 → 2027-07-17 (-4d) | -137.02d → -134d |
| 8614 | **RHD4-02-002-L02-(SL)-Street Lighting Drawpit** | 2027-07-26 → 2027-07-22 (-4d) | 2027-07-31 → 2027-07-26 (-5d) |  |
| RHD4CZ9L02SL5100 | Excavation of Drawpit size 600x600x900mm for Street Lighting Network - (RD-L-2)-Z9-L02-SL | 2027-07-26 → 2027-07-22 (-4d) | 2027-07-28 → 2027-07-24 (-4d) | -141.02d → -138d |
| RHD4CZ9L02SL5200 | Installation of Drawpit size 600x600x900mm for Street Lighting Network - (RD-L-2)-Z9-L02-SL | 2027-07-28 → 2027-07-25 (-3d) | 2027-07-31 → 2027-07-26 (-5d) | -141.02d → -138d |
| 8615 | **RHD4-02-002-L02-(SL)-Street Lighting cables** | 2027-07-31 → 2027-07-27 (-4d) | 2027-09-28 → 2027-09-22 (-6d) |  |
| RHD4CZ9L02SL3100 | Excavation for Street Lighting Cables for Street Lighting Network - (RD-L-2)-Z9-L02-SL | 2027-07-31 → 2027-07-27 (-4d) | 2027-08-18 → 2027-08-14 (-4d) | -141.02d → -138d |
| RHD4CZ9L02SL3200 | Cable Laying of Street Lighting Cables for Street Lighting Network - (RD-L-2)-Z9-L02-SL | 2027-08-18 → 2027-08-15 (-3d) | 2027-09-02 → 2027-08-29 (-4d) | -103.02d → -100d |
| RHD4CZ9L02SL3300 | Warning tape and Backfill for Street Lighting Cables for Street Lighting Network - (RD-L-2)-Z9-L02-SL | 2027-09-02 → 2027-08-30 (-3d) | 2027-09-18 → 2027-09-13 (-5d) | -103.02d → -100d |
| RHD4CZ9L02SL3400 | Testing of Street Lighting Cables for Street Lighting Network - (RD-L-2)-Z9-L02-SL | 2027-09-18 → 2027-09-14 (-4d) | 2027-09-28 → 2027-09-22 (-6d) | -103.02d → -100d |
| 8616 | **RHD4-02-002-L02-(SL)-Street Lighting Poles** | 2027-09-28 → 2027-09-25 (-3d) | 2027-11-18 → 2027-11-14 (-4d) |  |
| RHD4CZ9L02SL1100 | Excavation for RC Base for Lighting Poles for Street Lighting Network - (RD-L-2)-Z9-L02-SL | 2027-09-28 → 2027-09-25 (-3d) | 2027-10-07 → 2027-10-03 (-4d) | -103.02d → -100d |
| RHD4CZ9L02SL1200 | Installation for RC Base for Lighting Poles for Street Lighting Network - (RD-L-2)-Z9-L02-SL | 2027-10-07 → 2027-10-04 (-3d) | 2027-10-17 → 2027-10-12 (-5d) | -103.02d → -100d |

| ID | Task | Start | Finish | Total float |
| --- | --- | --- | --- | --- |
| RHD4CZ9L02SL1300 | Backfill for RC Base for Lighting Poles for Street Lighting Network - (RD-L-2)-Z9-L02-SL | 2027-10-17 → 2027-10-13 (-4d) | 2027-10-26 → 2027-10-21 (-5d) | -103.02d → -100d |
| RHD4CZ9L02SL1400 | Installation for Lighting Poles for Street Lighting Network - (RD-L-2)-Z9-L02-SL | 2027-10-26 → 2027-10-23 (-3d) | 2027-11-09 → 2027-11-04 (-5d) | -103.02d → -100d |
| RHD4CZ9L02SL1500 | Luminaire Installation for Lighting Poles for Street Lighting Network - (RD-L-2)-Z9-L02-SL | 2027-11-09 → 2027-11-06 (-3d) | 2027-11-18 → 2027-11-14 (-4d) | -103.02d → -100d |
| 8617 | **RHD4-02-002-L02-(SL)-Street Lighting Feeder Pillars** | 2027-11-18 → 2027-11-15 (-3d) | 2027-11-25 → 2027-11-21 (-4d) |  |
| RHD4CZ9L02SL4100 | Leveling for Distribution Pillars for Street Lighting Network - (RD-L-2)-Z9-L02-SL | 2027-11-18 → 2027-11-15 (-3d) | 2027-11-21 → 2027-11-16 (-5d) | -103.02d → -100d |
| RHD4CZ9L02SL4200 | Lean Concrete for Distribution Pillars for Street Lighting Network - (RD-L-2)-Z9-L02-SL | 2027-11-21 → 2027-11-17 (-4d) | 2027-11-23 → 2027-11-18 (-5d) | -103.02d → -100d |
| RHD4CZ9L02SL4300 | Installation of Distribution Pillars for Street Lighting Network - (RD-L-2)-Z9-L02-SL | 2027-11-23 → 2027-11-20 (-3d) | 2027-11-25 → 2027-11-21 (-4d) | -103.02d → -100d |
| 8618 | **RHD4-02-002-L02-(SL)-Street Lighting Earthing System** | 2027-11-25 → 2027-11-22 (-3d) | 2027-11-28 → 2027-11-23 (-5d) |  |
| RHD4CZ9L02SL6100 | Installation of Earthing for Lighting Poles and Fedder Pillers for Street Lighting Network - (RD-L-2)-Z9-L02-SL | 2027-11-25 → 2027-11-22 (-3d) | 2027-11-28 → 2027-11-23 (-5d) | -103.02d → -100d |
| 8624 | **RHD4-02-002-Z9-L02-Telecommunications Network - TC** | 2027-01-26 → 2027-01-27 (+1d) | 2027-09-16 → 2027-09-12 (-4d) |  |
| 8625 | **RHD4-02-002-L02-(TC)-Telecommunications Ducts** | 2027-07-31 → 2027-07-27 (-4d) | 2027-08-31 → 2027-08-26 (-5d) |  |
| RHD4CZ9L02TC2100 | Excavation of HDPE Ducts for Telecom Network - (RD-L-2)-Z9-L02-TC | 2027-07-31 → 2027-07-27 (-4d) | 2027-08-10 → 2027-08-05 (-5d) | -141.02d → -138d |
| RHD4CZ9L02TC2200 | Installation of HDPE Ducts for Telecom Network - (RD-L-2)-Z9-L02-TC | 2027-08-10 → 2027-08-07 (-3d) | 2027-08-21 → 2027-08-16 (-5d) | -141.02d → -138d |
| RHD4CZ9L02TC2400 | Backfilling of HDPE Ducts for Telecom Network - (RD-L-2)-Z9-L02-TC | 2027-08-21 → 2027-08-17 (-4d) | 2027-08-31 → 2027-08-26 (-5d) | -141.02d → -138d |
| 8626 | **RHD4-02-002-L02-(TC)-Telecommunications Manholes** | 2027-08-31 → 2027-08-28 (-3d) | 2027-09-16 → 2027-09-12 (-4d) |  |
| RHD4CZ9L02TC5100 | Excavation for Manholes for Telecom Network - (RD-L-2)-Z9-L02-TC | 2027-08-31 → 2027-08-28 (-3d) | 2027-09-08 → 2027-09-04 (-4d) | -141.02d → -138d |
| RHD4CZ9L02TC5200 | Installation of Manholes for Telecom Network - (RD-L-2)-Z9-L02-TC | 2027-09-08 → 2027-09-05 (-3d) | 2027-09-16 → 2027-09-12 (-4d) | -141.02d → -138d |
| 8627 | **RHD4-02-002-L02-(TC)-Telecomminications Road Crossings** | 2027-01-26 → 2027-01-27 (+1d) | 2027-02-03 → 2027-02-04 (+1d) |  |
| RHD4CZ9L02TC3100 | Excavation for Road Crossings for Telecom Network - (RD-L-2)-Z9-L02-TC | 2027-01-26 → 2027-01-27 (+1d) | 2027-01-27 → 2027-01-28 (+1d) | -187d → -188d |
| RHD4CZ9L02TC3200 | Installation of Road Crossings for Telecom Network - (RD-L-2)-Z9-L02-TC | 2027-01-28 → 2027-01-30 (+2d) | 2027-01-30 → 2027-01-31 (+1d) | -186d → -187d |
| RHD4CZ9L02TC3300 | Pouring of Road Crossings for Telecom Network - (RD-L-2)-Z9-L02-TC | 2027-01-31 → 2027-02-01 (+1d) | 2027-02-01 → 2027-02-02 (+1d) | -179d → -180d |
| RHD4CZ9L02TC3400 | Backfilling of Road Crossings for Telecom Network - (RD-L-2)-Z9-L02-TC | 2027-02-02 → 2027-02-03 (+1d) | 2027-02-03 → 2027-02-04 (+1d) | -179d → -180d |
| 8628 | **RHD4-02-002-Z9-L02-Information and Communication Technologies - ICT** | 2027-01-28 → 2027-01-30 (+2d) | 2027-11-11 → 2027-11-07 (-4d) |  |
| 8629 | **RHD4-02-002-L02-(ICT)-Information and Communication Technologies Ducts** | 2027-09-08 → 2027-09-05 (-3d) | 2027-10-19 → 2027-10-14 (-5d) |  |
| RHD4CZ9L02ICT2100 | Excavation of HDPE Ducts for ICT Network - (RD-L-2)-Z9-L02-ICT | 2027-09-08 → 2027-09-05 (-3d) | 2027-09-20 → 2027-09-15 (-5d) | -140.02d → -137d |
| RHD4CZ9L02ICT2200 | Installation of HDPE Ducts for ICT Network - (RD-L-2)-Z9-L02-ICT | 2027-09-20 → 2027-09-16 (-4d) | 2027-10-07 → 2027-10-03 (-4d) | -140.02d → -137d |
| RHD4CZ9L02ICT2400 | Backfilling of HDPE Ducts for ICT Network - (RD-L-2)-Z9-L02-ICT | 2027-10-07 → 2027-10-04 (-3d) | 2027-10-19 → 2027-10-14 (-5d) | -140.02d → -137d |
| 8630 | **RHD4-02-002-L02-(ICT)-Information and Communication Technologies Manholes** | 2027-10-19 → 2027-10-16 (-3d) | 2027-11-11 → 2027-11-07 (-4d) |  |
| RHD4CZ9L02ICT5100 | Excavation for Manholes for ICT Network - (RD-L-2)-Z9-L02-ICT | 2027-10-19 → 2027-10-16 (-3d) | 2027-10-31 → 2027-10-26 (-5d) | -140.02d → -137d |
| RHD4CZ9L02ICT5200 | Installation of Manholes for ICT Network - (RD-L-2)-Z9-L02-ICT | 2027-10-31 → 2027-10-27 (-4d) | 2027-11-11 → 2027-11-07 (-4d) | -140.02d → -137d |
| 8631 | **RHD4-02-002-L02-(ICT)-Information and Communication Technologies Road Crossings** | 2027-01-28 → 2027-01-30 (+2d) | 2027-02-27 → 2027-02-15 (-12d) |  |
| RHD4CZ9L02ICT3100 | Excavation for Road Crossings for ICT Network - (RD-L-2)-Z9-L02-ICT | 2027-01-28 → 2027-01-30 (+2d) | 2027-01-31 → 2027-02-01 (+1d) | -187d → -188d |
| RHD4CZ9L02ICT3200 | Installation of Road Crossings for ICT Network - (RD-L-2)-Z9-L02-ICT | 2027-02-14 → 2027-02-03 (-11d) | 2027-02-17 → 2027-02-07 (-10d) | -198d → -189d |
| RHD4CZ9L02ICT3300 | Pouring of Road Crossings for ICT Network - (RD-L-2)-Z9-L02-ICT | 2027-02-18 → 2027-02-08 (-10d) | 2027-02-23 → 2027-02-11 (-12d) | -198d → -189d |
| RHD4CZ9L02ICT3400 | Backfilling of Road Crossings for ICT Network - (RD-L-2)-Z9-L02-ICT | 2027-02-24 → 2027-02-13 (-11d) | 2027-02-27 → 2027-02-15 (-12d) | -198d → -189d |
| 8632 | **RHD4-02-002-Z9-L02-Security Network - CCTV** | 2027-11-11 → 2027-11-08 (-3d) | 2027-12-13 → 2027-12-08 (-5d) |  |
| 8633 | **RHD4-02-002-L02-(CCTV)-Civil Works** | 2027-11-11 → 2027-11-08 (-3d) | 2027-11-17 → 2027-11-13 (-4d) |  |
| RHD4CZ9L02CCTV2100 | Civil Works for Security Network - (RD-L-2)-Z9-L02-CCTV | 2027-11-11 → 2027-11-08 (-3d) | 2027-11-17 → 2027-11-13 (-4d) | -140.02d → -137d |
| 8634 | **RHD4-02-002-L02-(CCTV)-CCTV Poles** | 2027-11-17 → 2027-11-14 (-3d) | 2027-11-29 → 2027-11-24 (-5d) |  |
| RHD4CZ9L02CCTV1100 | Excavation for RC Base for CCTV Poles for Security Network - (RD-L-2)-Z9-L02-CCTV | 2027-11-17 → 2027-11-14 (-3d) | 2027-11-20 → 2027-11-15 (-5d) | -140.02d → -137d |
| RHD4CZ9L02CCTV1200 | Installation for RC Base for CCTV Poles for Security Network - (RD-L-2)-Z9-L02-CCTV | 2027-11-20 → 2027-11-16 (-4d) | 2027-11-22 → 2027-11-17 (-5d) | -140.02d → -137d |
| RHD4CZ9L02CCTV1300 | Backfill for RC Base for CCTV Poles for Security Network - (RD-L-2)-Z9-L02-CCTV | 2027-11-22 → 2027-11-18 (-4d) | 2027-11-24 → 2027-11-20 (-4d) | -140.02d → -137d |
| RHD4CZ9L02CCTV1400 | Installation for CCTV Poles for Security Network - (RD-L-2)-Z9-L02-CCTV | 2027-11-24 → 2027-11-21 (-3d) | 2027-11-27 → 2027-11-22 (-5d) | -140.02d → -137d |
| RHD4CZ9L02CCTV1500 | Protection post Installation for CCTV Poles for Security Network - (RD-L-2)-Z9-L02-CCTV | 2027-11-27 → 2027-11-23 (-4d) | 2027-11-29 → 2027-11-24 (-5d) | -137.02d → -134d |
| 8635 | **RHD4-02-002-L02-(CCTV)-Camera** | 2027-11-29 → 2027-11-25 (-4d) | 2027-12-01 → 2027-11-27 (-4d) |  |
| RHD4CZ9L02CCTV3100 | Installation for Cameras for Security Network - (RD-L-2)-Z9-L02-CCTV | 2027-11-29 → 2027-11-25 (-4d) | 2027-12-01 → 2027-11-27 (-4d) | -140.02d → -137d |
| 8636 | **RHD4-02-002-L02-(CCTV)-Power and Infrastructure** | 2027-11-27 → 2027-11-23 (-4d) | 2027-11-29 → 2027-11-24 (-5d) |  |
| RHD4CZ9L02CCTV4100 | Installation of Power outlet, UPS and midspan for PTZ Camerafor Cameras for Security Network - (RD-L-2)-Z9-L02-CCTV | 2027-11-27 → 2027-11-23 (-4d) | 2027-11-29 → 2027-11-24 (-5d) | -140.02d → -137d |
| 8638 | **RHD4-02-002-L02-(CCTV)-CCTV Panels and Components** | 2027-12-01 → 2027-11-28 (-3d) | 2027-12-13 → 2027-12-08 (-5d) |  |
| RHD4CZ9L02CCTV6100 | Installation for CCTV Panels for Security Network - (RD-L-2)-Z9-L02-CCTV | 2027-12-01 → 2027-11-28 (-3d) | 2027-12-13 → 2027-12-08 (-5d) | -140.02d → -137d |
| 5622 | **RHD4-02-002-Z7** |  | 2028-06-07 → 2028-06-05 (-2d) |  |
| 6190 | **RHD4-02-002-Z7-C032** | 2027-02-14 → 2027-02-06 (-8d) | 2027-09-20 → 2027-09-25 (+5d) |  |
| 6369 | **RHD4-02-002-Z7-C032-Road Works - RD** | 2027-02-27 → 2027-02-28 (+1d) | 2027-09-20 → 2027-09-25 (+5d) |  |
| 6370 | **RHD4-02-002-C032-(RD)-Subgrade** | 2027-02-27 → 2027-02-28 (+1d) | 2027-03-04 → 2027-03-06 (+2d) |  |
| RHD4CZ7C032RD1100 | Supply, lay and compaction subgrade compacted thickness 300 mm for Roads - (RD-C-3/2)-Z7-C032-RD | 2027-02-27 → 2027-02-28 (+1d) | 2027-03-04 → 2027-03-06 (+2d) | -188d → -189d |
| 6371 | **RHD4-02-002-C032-(RD)-Aggregate Base Course** | 2027-03-06 → 2027-03-07 (+1d) | 2027-03-14 → 2027-03-15 (+1d) |  |
| RHD4CZ7C032RD2100 | Supply, lay and compaction Aggregate base course compacted thickness 300 mmfor Roads - (RD-C-3/2)-Z7-C032-RD | 2027-03-06 → 2027-03-07 (+1d) | 2027-03-14 → 2027-03-15 (+1d) | -188d → -189d |
| 6372 | **RHD4-02-002-C032-(RD)-Bituminous base course Two Layers, including (MC1)&(RC2)** | 2027-03-15 → 2027-03-16 (+1d) | 2027-09-05 → 2027-09-08 (+3d) |  |
| RHD4CZ7C032RD3100 | Supply, lay and Asphaltic base course including Prime Coat (MC1) for 1st Layer - (RD-C-3/2)-Z7-C032-RD | 2027-03-15 → 2027-03-16 (+1d) | 2027-03-18 → 2027-03-20 (+2d) | -188d → -189d |
| RHD4CZ7C032RD3200 | Supply, lay and Asphaltic base course including Tack Coat (RC2) for 2nd Layer - (RD-C-3/2)-Z7-C032-RD | 2027-09-01 → 2027-09-05 (+4d) | 2027-09-05 → 2027-09-08 (+3d) | -175d → -178d |
| 6374 | **RHD4-02-002-C032-(RD)-Precast Concrete Curb** | 2027-09-06 → 2027-09-09 (+3d) | 2027-09-13 → 2027-09-16 (+3d) |  |
| RHD4CZ7C032RD5100 | Supply and installation Precast Concrete Kerb for Roads - (RD-C-3/2)-Z7-C032-RD | 2027-09-06 → 2027-09-09 (+3d) | 2027-09-13 → 2027-09-16 (+3d) | -175d → -178d |
| 6377 | **RHD4-02-002-C032-(RD)-Traffic Signage** | 2027-09-14 → 2027-09-18 (+4d) | 2027-09-20 → 2027-09-25 (+5d) |  |
| RHD4CZ7C032RD8100 | Installation of Traffic Signage for Road Network - (RD-C-3/2)-Z7-C032-RD | 2027-09-14 → 2027-09-18 (+4d) | 2027-09-20 → 2027-09-25 (+5d) | -175d → -178d |
| 6373 | **RHD4-02-002-C032-(RD)-Bituminous concrete wearing course including tack coat (RC2)** | 2027-09-14 → 2027-09-18 (+4d) | 2027-09-15 → 2027-09-19 (+4d) |  |
| RHD4CZ7C032RD4100 | Supply, lay and compaction Asphaltic wearing course including tack Coat (RC2)for Road Network - (RD-C-3/2)-Z7-C032-RD | 2027-09-14 → 2027-09-18 (+4d) | 2027-09-15 → 2027-09-19 (+4d) | -175d → -178d |
| 6376 | **RHD4-02-002-C032-(RD)-Pavement Marking** | 2027-09-16 → 2027-09-20 (+4d) | 2027-09-20 → 2027-09-25 (+5d) |  |
| RHD4CZ7C032RD7100 | Pavement Markings for Road Network - (RD-C-3/2)-Z7-C032-RD | 2027-09-16 → 2027-09-20 (+4d) | 2027-09-20 → 2027-09-25 (+5d) | -175d → -178d |
| 6280 | **RHD4-02-002-Z7-C032-Potable Network - PT** | 2027-05-03 → 2027-04-28 (-5d) | 2027-06-09 → 2027-06-05 (-4d) |  |
| 6283 | **RHD4-02-002-C032-(PT)-HDPE Pipes - 200 mm diameter** | 2027-05-03 → 2027-04-28 (-5d) | 2027-05-24 → 2027-05-19 (-5d) |  |

| ID | Task | Start | Finish | Total float |
| --- | --- | --- | --- | --- |
| RHD4CZ7C032PT1102 | Excavation works for HDPE Pipline 200 mm - (RD-C-3/2)-Z7-C032-PT | 2027-05-03 → 2027-04-28 (-5d) | 2027-05-04 → 2027-04-29 (-5d) | -87d → -83d |
| RHD4CZ7C032PT1202 | Bedding works for HDPE Pipline 200 mm - (RD-C-3/2)-Z7-C032-PT | 2027-05-05 → 2027-05-01 (-4d) | 2027-05-06 → 2027-05-02 (-4d) | -75d → -71d |
| RHD4CZ7C032PT1302 | Installing for HDPE Pipline 200 mm - (RD-C-3/2)-Z7-C032-PT | 2027-05-08 → 2027-05-03 (-5d) | 2027-05-09 → 2027-05-04 (-5d) | -75d → -71d |
| RHD4CZ7C032PT1402 | Primary Test for HDPE Pipline 200 mm - (RD-C-3/2)-Z7-C032-PT | 2027-05-20 → 2027-05-11 (-9d) | 2027-05-22 → 2027-05-12 (-10d) | -77d → -73d |
| RHD4CZ7C032PT1502 | Backfilling and warning tape works for HDPE Pipline 200 mm - (RD-C-3/2)-Z7-C032-PT | 2027-05-23 → 2027-05-13 (-10d) | 2027-05-24 → 2027-05-19 (-5d) | -77d → -73d |
| 6282 | **RHD4-02-002-C032-(PT)-HDPE Pipes - 160 mm diameter** | 2027-05-05 → 2027-05-01 (-4d) | 2027-05-24 → 2027-05-19 (-5d) |  |
| RHD4CZ7C032PT1101 | Excavation works for HDPE Pipline 160 mm - (RD-C-3/2)-Z7-C032-PT | 2027-05-05 → 2027-05-01 (-4d) | 2027-05-06 → 2027-05-02 (-4d) | -87d → -83d |
| RHD4CZ7C032PT1201 | Bedding works for HDPE Pipline 160 mm - (RD-C-3/2)-Z7-C032-PT | 2027-05-08 → 2027-05-03 (-5d) | 2027-05-09 → 2027-05-04 (-5d) | -87d → -83d |
| RHD4CZ7C032PT1301 | Installing for HDPE Pipline 160 mm - (RD-C-3/2)-Z7-C032-PT | 2027-05-10 → 2027-05-05 (-5d) | 2027-05-12 → 2027-05-08 (-4d) | -87d → -83d |
| RHD4CZ7C032PT1401 | Primary Test for HDPE Pipline 160 mm - (RD-C-3/2)-Z7-C032-PT | 2027-05-20 → 2027-05-11 (-9d) | 2027-05-22 → 2027-05-12 (-10d) | -77d → -73d |
| RHD4CZ7C032PT1501 | Backfilling and warning tape works for HDPE Pipline 160 mm - (RD-C-3/2)-Z7-C032-PT | 2027-05-23 → 2027-05-13 (-10d) | 2027-05-24 → 2027-05-19 (-5d) | -77d → -73d |
| 6286 | **RHD4-02-002-C032-(PT)-Gate Valves (Direct Buried)** | 2027-05-11 → 2027-05-06 (-5d) | 2027-05-26 → 2027-05-22 (-4d) |  |
| RHD4CZ7C032PT3100 | Installation for Direct Buried Gate Valves - (RD-C-3/2)-Z7-C032-PT | 2027-05-11 → 2027-05-06 (-5d) | 2027-05-12 → 2027-05-08 (-4d) | -71d → -67d |
| RHD4CZ7C032PT3200 | Stem and Service box for Direct Buried Gate Valves - (RD-C-3/2)-Z7-C032-PT | 2027-05-25 → 2027-05-20 (-5d) | 2027-05-26 → 2027-05-22 (-4d) | -77d → -73d |
| 6289 | **RHD4-02-002-C032-(PT)-Wash out Valve Chambers** | 2027-05-13 → 2027-05-09 (-4d) | 2027-05-26 → 2027-05-22 (-4d) |  |
| RHD4CZ7C032PT2101 | Excavation and Bedding for Wash out Valve Chambers for Potable Water Network - (RD-C-3/2)-Z7-C032-PT | 2027-05-13 → 2027-05-09 (-4d) | 2027-05-19 → 2027-05-10 (-9d) | -87d → -83d |
| RHD4CZ7C032PT2201 | PC works for Wash out Valve Chambers for Potable Water Network - (RD-C-3/2)-Z7-C032-PT | 2027-05-20 → 2027-05-11 (-9d) | 2027-05-22 → 2027-05-12 (-10d) | -87d → -83d |
| RHD4CZ7C032PT2301 | Installation for Wash out Valve Chambers for Potable Water Network - (RD-C-3/2)-Z7-C032-PT | 2027-05-23 → 2027-05-13 (-10d) | 2027-05-24 → 2027-05-19 (-5d) | -87d → -83d |
| RHD4CZ7C032PT2401 | Backfilling works for Wash out Valve Chambers for Potable Water Network - (RD-C-3/2)-Z7-C032-PT | 2027-05-25 → 2027-05-20 (-5d) | 2027-05-26 → 2027-05-22 (-4d) | -87d → -83d |
| 6290 | **RHD4-02-002-C032-(PT)-Wash out Valves** | 2027-05-25 → 2027-05-20 (-5d) | 2027-05-29 → 2027-05-24 (-5d) |  |
| RHD4CZ7C032PT3102 | Installation for Wash out Valves for Potable Water Network - (RD-C-3/2)-Z7-C032-PT | 2027-05-25 → 2027-05-20 (-5d) | 2027-05-26 → 2027-05-22 (-4d) | -87d → -83d |
| RHD4CZ7C032PT3202 | Stem and Service box for Wash out Valves for Potable Water Network - (RD-C-3/2)-Z7-C032-PT | 2027-05-27 → 2027-05-23 (-4d) | 2027-05-29 → 2027-05-24 (-5d) | -87d → -83d |
| 6293 | **RHD4-02-002-C032-(PT)-Fire Hydrant** | 2027-05-30 → 2027-05-25 (-5d) | 2027-06-09 → 2027-06-05 (-4d) |  |
| RHD4CZ7C032PT4100 | Excavation and Bedding and Pipe Installation for Fire Hydrant - (RD-C-3/2)-Z7-C032-PT | 2027-05-30 → 2027-05-25 (-5d) | 2027-05-31 → 2027-05-26 (-5d) | -87d → -83d |
| RHD4CZ7C032PT4200 | Valve Installation for Fire Hydrant - (RD-C-3/2)-Z7-C032-PT | 2027-06-01 → 2027-05-27 (-5d) | 2027-06-02 → 2027-05-29 (-4d) | -87d → -83d |
| RHD4CZ7C032PT4300 | Stem for Fire Hydrant - (RD-C-3/2)-Z7-C032-PT | 2027-06-03 → 2027-05-30 (-4d) | 2027-06-05 → 2027-05-31 (-5d) | -87d → -83d |
| RHD4CZ7C032PT4400 | Fire Installation for Fire Hydrant - (RD-C-3/2)-Z7-C032-PT | 2027-06-06 → 2027-06-01 (-5d) | 2027-06-07 → 2027-06-02 (-5d) | -87d → -83d |
| RHD4CZ7C032PT4500 | Protection Barriers for Fire Hydrant - (RD-C-3/2)-Z7-C032-PT | 2027-06-08 → 2027-06-03 (-5d) | 2027-06-09 → 2027-06-05 (-4d) | -87d → -83d |
| 6294 | **RHD4-02-002-C032-(PT)-Concrete Encasement** | 2027-05-10 → 2027-05-05 (-5d) | 2027-05-19 → 2027-05-10 (-9d) |  |
| RHD4CZ7C032PT5100 | Pipe Encasement for Potable Pipelines - (RD-C-3/2)-Z7-C032-PT | 2027-05-10 → 2027-05-05 (-5d) | 2027-05-19 → 2027-05-10 (-9d) | -77d → -73d |
| 1755 | **RHD4-02-002-Z7-C032-Irrigation Network - IRR** | 2027-05-09 → 2027-05-04 (-5d) | 2027-06-05 → 2027-05-31 (-5d) |  |
| 1770 | **RHD4-02-002-C032-(IRR)-Air Valves** | 2027-05-20 → 2027-05-11 (-9d) | 2027-06-02 → 2027-05-29 (-4d) |  |
| RHD4CZ7C032IRR3103 | Installation for Air Valves for Irrigation Network - (RD-C-3/2)-Z7-C032-IRR | 2027-05-20 → 2027-05-11 (-9d) | 2027-05-22 → 2027-05-12 (-10d) | -76d → -72d |
| RHD4CZ7C032IRR3203 | Stem and Service box for Air Valves for Irrigation Network - (RD-C-3/2)-Z7-C032-IRR | 2027-06-01 → 2027-05-27 (-5d) | 2027-06-02 → 2027-05-29 (-4d) | -84d → -80d |
| 6107 | **RHD4-02-002-C032-(IRR)-HDPE Pipes - 160 mm diameter** | 2027-05-09 → 2027-05-04 (-5d) | 2027-06-02 → 2027-05-29 (-4d) |  |
| RHD4CZ7C032IRR1100 | Excavation works for HDPE Pipline 160 mm - (RD-C-3/2)-Z7-C032-IRR | 2027-05-09 → 2027-05-04 (-5d) | 2027-05-12 → 2027-05-08 (-4d) | -86d → -82d |
| RHD4CZ7C032IRR1200 | Bedding works for HDPE Pipline 160 mm - (RD-C-3/2)-Z7-C032-IRR | 2027-05-13 → 2027-05-09 (-4d) | 2027-05-22 → 2027-05-12 (-10d) | -86d → -82d |
| RHD4CZ7C032IRR1300 | Installing for HDPE Pipline 160 mm - (RD-C-3/2)-Z7-C032-IRR | 2027-05-23 → 2027-05-13 (-10d) | 2027-05-26 → 2027-05-22 (-4d) | -86d → -82d |
| RHD4CZ7C032IRR1400 | Primary Test for HDPE Pipline 160 mm - (RD-C-3/2)-Z7-C032-IRR | 2027-05-27 → 2027-05-23 (-4d) | 2027-05-29 → 2027-05-24 (-5d) | -86d → -82d |
| RHD4CZ7C032IRR1500 | Backfilling and warning tape works for HDPE Pipline 160 mm - (RD-C-3/2)-Z7-C032-IRR | 2027-05-30 → 2027-05-25 (-5d) | 2027-06-02 → 2027-05-29 (-4d) | -86d → -82d |
| 6115 | **RHD4-02-002-C032-(IRR)-Gate Valves (Direct Buried)** | 2027-05-25 → 2027-05-20 (-5d) | 2027-06-05 → 2027-05-31 (-5d) |  |
| RHD4CZ7C032IRR3100 | Installation for Direct Buried Gate Valves - (RD-C-3/2)-Z7-C032-IRR | 2027-05-25 → 2027-05-20 (-5d) | 2027-05-26 → 2027-05-22 (-4d) | -80d → -76d |
| RHD4CZ7C032IRR3200 | Stem and Service box for Direct Buried Gate Valves - (RD-C-3/2)-Z7-C032-IRR | 2027-06-03 → 2027-05-30 (-4d) | 2027-06-05 → 2027-05-31 (-5d) | -86d → -82d |
| 6685 | **RHD4-02-002-C032-(IRR)-Wash out Chamber** | 2027-05-09 → 2027-05-04 (-5d) | 2027-05-22 → 2027-05-12 (-10d) |  |
| RHD4CZ7C032IRR2101 | Excavation and Bedding for Wash out Chamber for Irrigation Network - (RD-C-3/2)-Z7-C032-IRR | 2027-05-09 → 2027-05-04 (-5d) | 2027-05-10 → 2027-05-05 (-5d) | -83d → -79d |
| RHD4CZ7C032IRR2201 | PC works for Wash out Chamber for Irrigation Network - (RD-C-3/2)-Z7-C032-IRR | 2027-05-11 → 2027-05-06 (-5d) | 2027-05-12 → 2027-05-08 (-4d) | -83d → -79d |
| RHD4CZ7C032IRR2301 | Installation for Wash out Chamber for Irrigation Network - (RD-C-3/2)-Z7-C032-IRR | 2027-05-13 → 2027-05-09 (-4d) | 2027-05-19 → 2027-05-10 (-9d) | -83d → -79d |
| RHD4CZ7C032IRR2401 | Backfilling works for Wash out Chamber for Irrigation Network - (RD-C-3/2)-Z7-C032-IRR | 2027-05-20 → 2027-05-11 (-9d) | 2027-05-22 → 2027-05-12 (-10d) | -83d → -79d |
| 6686 | **RHD4-02-002-C032-(IRR)-Wash out Valves** | 2027-05-20 → 2027-05-11 (-9d) | 2027-05-24 → 2027-05-19 (-5d) |  |
| RHD4CZ7C032IRR3102 | Installation for Wash out Valve for Irrigation Network - (RD-C-3/2)-Z7-C032-IRR | 2027-05-20 → 2027-05-11 (-9d) | 2027-05-22 → 2027-05-12 (-10d) | -83d → -79d |
| RHD4CZ7C032IRR3202 | Stem and Service box for Wash out Valve for Irrigation Network - (RD-C-3/2)-Z7-C032-IRR | 2027-05-23 → 2027-05-13 (-10d) | 2027-05-24 → 2027-05-19 (-5d) | -83d → -79d |
| 1769 | **RHD4-02-002-C032-(IRR)-Air Valve Chamber** | 2027-05-09 → 2027-05-04 (-5d) | 2027-05-31 → 2027-05-26 (-5d) |  |
| RHD4CZ7C032IRR2102 | Excavation and Bedding for Valve Chamber for Irrigation Network - (RD-C-3/2)-Z7-C032-IRR | 2027-05-09 → 2027-05-04 (-5d) | 2027-05-10 → 2027-05-05 (-5d) | -76d → -72d |
| RHD4CZ7C032IRR2202 | PC works for Valve Chamber for Irrigation Network - (RD-C-3/2)-Z7-C032-IRR | 2027-05-11 → 2027-05-06 (-5d) | 2027-05-12 → 2027-05-08 (-4d) | -76d → -72d |
| RHD4CZ7C032IRR2302 | Installation for Valve Chamber for Irrigation Network - (RD-C-3/2)-Z7-C032-IRR | 2027-05-13 → 2027-05-09 (-4d) | 2027-05-19 → 2027-05-10 (-9d) | -76d → -72d |
| RHD4CZ7C032IRR2402 | Backfilling works for Valve Chamber for Irrigation Network - (RD-C-3/2)-Z7-C032-IRR | 2027-05-30 → 2027-05-25 (-5d) | 2027-05-31 → 2027-05-26 (-5d) | -84d → -80d |
| 1771 | **RHD4-02-002-C032-(IRR)-Concrete Encasement** | 2027-05-27 → 2027-05-23 (-4d) | 2027-05-29 → 2027-05-24 (-5d) |  |
| RHD4CZ7C032IRR5100 | Pipe Encasement for Irrigation Pipelines - (RD-C-3/2)-Z7-C032-IRR | 2027-05-27 → 2027-05-23 (-4d) | 2027-05-29 → 2027-05-24 (-5d) | -84d → -80d |
| 6329 | **RHD4-02-002-Z7-C032-Medium Voltage Network - MV** | 2027-03-20 → 2027-03-21 (+1d) | 2027-08-09 → 2027-08-05 (-4d) |  |
| 6330 | **RHD4-02-002-C032-(MV)-Medium Voltage cable trench** | 2027-07-06 → 2027-07-04 (-2d) | 2027-08-09 → 2027-08-05 (-4d) |  |
| RHD4CZ7C032MV1100 | Excavation for Medium Voltage Trench - (RD-C-3/2)-Z7-C032-MV | 2027-07-06 → 2027-07-04 (-2d) | 2027-07-13 → 2027-07-10 (-3d) | -142.02d → -140d |
| RHD4CZ7C032MV1200 | Trench Backfilling for Medium Voltage Network - (RD-C-3/2)-Z7-C032-MV | 2027-08-02 → 2027-07-31 (-2d) | 2027-08-09 → 2027-08-05 (-4d) | -142.02d → -140d |
| 6331 | **RHD4-02-002-C032-(MV)-Medium Voltage duct banks** | 2027-03-20 → 2027-03-21 (+1d) | 2027-04-22 → 2027-04-24 (+2d) |  |
| RHD4CZ7C032MV2100 | Excavation of Duct Banks for Medium Voltage Network - (RD-C-3/2)-Z7-C032-MV | 2027-03-20 → 2027-03-21 (+1d) | 2027-03-28 → 2027-03-29 (+1d) | -179d → -180d |
| RHD4CZ7C032MV2200 | Installation of Duct Banks for Medium Voltage Network - (RD-C-3/2)-Z7-C032-MV | 2027-03-29 → 2027-03-30 (+1d) | 2027-04-10 → 2027-04-11 (+1d) | -179d → -180d |
| RHD4CZ7C032MV2300 | Pouring of Duct Banks for Medium Voltage Network - (RD-C-3/2)-Z7-C032-MV | 2027-04-11 → 2027-04-12 (+1d) | 2027-04-19 → 2027-04-20 (+1d) | -179d → -180d |
| RHD4CZ7C032MV2400 | Backfilling of Duct Banks for Medium Voltage Network - (RD-C-3/2)-Z7-C032-MV | 2027-04-20 → 2027-04-21 (+1d) | 2027-04-22 → 2027-04-24 (+2d) | -179d → -180d |
| 6332 | **RHD4-02-002-C032-(MV)-Medium Voltage cables 3Cx 500 mm²** | 2027-07-13 → 2027-07-11 (-2d) | 2027-08-02 → 2027-07-29 (-4d) |  |
| RHD4CZ7C032MV3100 | Installation of Medium Voltage Cables 3Cx 500 mm² - (RD-C-3/2)-Z7-C032-MV | 2027-07-13 → 2027-07-11 (-2d) | 2027-07-21 → 2027-07-18 (-3d) | -142.02d → -140d |
| RHD4CZ7C032MV3200 | Joints Installation of Medium Voltage Cables 3Cx 500 mm² - (RD-C-3/2)-Z7-C032-MV | 2027-07-21 → 2027-07-19 (-2d) | 2027-07-25 → 2027-07-21 (-4d) | -142.02d → -140d |

| ID | Task | Start | Finish | Total float |
| --- | --- | --- | --- | --- |
| RHD4CZ7C032MV3300 | Testing of Medium Voltage Cables 3Cx 500 mm² - (RD-C-3/2)-Z7-C032-MV | 2027-07-25 → 2027-07-22 (-3d) | 2027-08-02 → 2027-07-29 (-4d) | -142.02d → -140d |
| 6336 | **RHD4-02-002-Z7-C032-Low Voltage Network - LV** | 2027-03-07 → 2027-03-08 (+1d) | 2027-04-25 → 2027-04-26 (+1d) |  |
| 6338 | **RHD4-02-002-C032-(LV)-Low Voltage Drawpit** | 2027-03-07 → 2027-03-08 (+1d) | 2027-03-14 → 2027-03-15 (+1d) |  |
| RHD4CZ7C032LV5100 | Excavation of Drawpit size 900x900x1000mm for Low Voltage Network - (RD-C-3/2)-Z7-C032-LV | 2027-03-07 → 2027-03-08 (+1d) | 2027-03-08 → 2027-03-13 (+5d) | -152d → -153d |
| RHD4CZ7C032LV5200 | Installation of Drawpit size 900x900x1000mm for Low Voltage Network - (RD-C-3/2)-Z7-C032-LV | 2027-03-13 → 2027-03-14 (+1d) | 2027-03-14 → 2027-03-15 (+1d) | -152d → -153d |
| 6339 | **RHD4-02-002-C032-(LV)-Low Voltage cables** | 2027-03-15 → 2027-03-16 (+1d) | 2027-04-25 → 2027-04-26 (+1d) |  |
| RHD4CZ7C032LV3100 | Excavation for Low Voltage Cables for Low Voltage Network - (RD-C-3/2)-Z7-C032-LV | 2027-03-15 → 2027-03-16 (+1d) | 2027-03-17 → 2027-03-18 (+1d) | -152d → -153d |
| RHD4CZ7C032LV3200 | Cable Laying of Low Voltage Cables for Low Voltage Network - (RD-C-3/2)-Z7-C032-LV | 2027-03-18 → 2027-03-20 (+2d) | 2027-03-20 → 2027-03-21 (+1d) | -152d → -153d |
| RHD4CZ7C032LV3300 | Warning tape and Backfill for Low Voltage Cables for Low Voltage Network - (RD-C-3/2)-Z7-C032-LV | 2027-03-21 → 2027-03-22 (+1d) | 2027-03-22 → 2027-03-23 (+1d) | -152d → -153d |
| RHD4CZ7C032LV3400 | Testing of Low Voltage Cables for Low Voltage Network - (RD-C-3/2)-Z7-C032-LV | 2027-04-24 → 2027-04-25 (+1d) | 2027-04-25 → 2027-04-26 (+1d) | -179d → -180d |
| 6342 | **RHD4-02-002-Z7-C032-Street Lighting Network - SL** | 2027-02-18 → 2027-02-20 (+2d) | 2027-06-06 → 2027-06-09 (+3d) |  |
| 6343 | **RHD4-02-002-C032-(SL)-Street Lighting duct banks** | 2027-02-18 → 2027-02-20 (+2d) | 2027-03-13 → 2027-03-14 (+1d) |  |
| RHD4CZ7C032SL2100 | Excavation of Duct Banks for Street Lighting Network - (RD-C-3/2)-Z7-C032-SL | 2027-02-18 → 2027-02-20 (+2d) | 2027-02-23 → 2027-02-24 (+1d) | -149d → -150d |
| RHD4CZ7C032SL2200 | Installation of Duct Banks for Street Lighting Network - (RD-C-3/2)-Z7-C032-SL | 2027-02-24 → 2027-02-25 (+1d) | 2027-03-01 → 2027-03-02 (+1d) | -149d → -150d |
| RHD4CZ7C032SL2300 | Pouring of Duct Banks for Street Lighting Network - (RD-C-3/2)-Z7-C032-SL | 2027-03-02 → 2027-03-03 (+1d) | 2027-03-06 → 2027-03-07 (+1d) | -149d → -150d |
| RHD4CZ7C032SL2400 | Backfilling of Duct Banks for Street Lighting Network - (RD-C-3/2)-Z7-C032-SL | 2027-03-07 → 2027-03-08 (+1d) | 2027-03-13 → 2027-03-14 (+1d) | -149d → -150d |
| 6344 | **RHD4-02-002-C032-(SL)-Street Lighting Drawpit** | 2027-05-03 → 2027-05-04 (+1d) | 2027-05-06 → 2027-05-08 (+2d) |  |
| RHD4CZ7C032SL5100 | Excavation of Drawpit size 600x600x900mm for Street Lighting Network - (RD-C-3/2)-Z7-C032-SL | 2027-05-03 → 2027-05-04 (+1d) | 2027-05-04 → 2027-05-05 (+1d) | -185d → -186d |
| RHD4CZ7C032SL5200 | Installation of Drawpit size 600x600x900mm for Street Lighting Network - (RD-C-3/2)-Z7-C032-SL | 2027-05-05 → 2027-05-06 (+1d) | 2027-05-06 → 2027-05-08 (+2d) | -185d → -186d |
| 6345 | **RHD4-02-002-C032-(SL)-Street Lighting cables** | 2027-05-08 → 2027-05-09 (+1d) | 2027-05-22 → 2027-05-23 (+1d) |  |
| RHD4CZ7C032SL3100 | Excavation for Street Lighting Cables for Street Lighting Network - (RD-C-3/2)-Z7-C032-SL | 2027-05-08 → 2027-05-09 (+1d) | 2027-05-10 → 2027-05-11 (+1d) | -185d → -186d |
| RHD4CZ7C032SL3200 | Cable Laying of Street Lighting Cables for Street Lighting Network - (RD-C-3/2)-Z7-C032-SL | 2027-05-11 → 2027-05-12 (+1d) | 2027-05-12 → 2027-05-13 (+1d) | -185d → -186d |
| RHD4CZ7C032SL3300 | Warning tape and Backfill for Street Lighting Cables for Street Lighting Network - (RD-C-3/2)-Z7-C032-SL | 2027-05-13 → 2027-05-19 (+6d) | 2027-05-19 → 2027-05-20 (+1d) | -185d → -186d |
| RHD4CZ7C032SL3400 | Testing of Street Lighting Cables for Street Lighting Network - (RD-C-3/2)-Z7-C032-SL | 2027-05-20 → 2027-05-22 (+2d) | 2027-05-22 → 2027-05-23 (+1d) | -185d → -186d |
| 6346 | **RHD4-02-002-C032-(SL)-Street Lighting Poles** | 2027-05-23 → 2027-05-26 (+3d) | 2027-06-06 → 2027-06-09 (+3d) |  |
| RHD4CZ7C032SL1100 | Excavation for RC Base for Lighting Poles for Street Lighting Network - (RD-C-3/2)-Z7-C032-SL | 2027-05-23 → 2027-05-26 (+3d) | 2027-05-24 → 2027-05-27 (+3d) | -185d → -188d |
| RHD4CZ7C032SL1200 | Installation for RC Base for Lighting Poles for Street Lighting Network - (RD-C-3/2)-Z7-C032-SL | 2027-05-25 → 2027-05-29 (+4d) | 2027-05-26 → 2027-05-30 (+4d) | -185d → -188d |
| RHD4CZ7C032SL1300 | Backfill for RC Base for Lighting Poles for Street Lighting Network - (RD-C-3/2)-Z7-C032-SL | 2027-05-27 → 2027-05-31 (+4d) | 2027-05-29 → 2027-06-01 (+3d) | -185d → -188d |
| RHD4CZ7C032SL1400 | Installation for Lighting Poles for Street Lighting Network - (RD-C-3/2)-Z7-C032-SL | 2027-05-30 → 2027-06-02 (+3d) | 2027-05-31 → 2027-06-03 (+3d) | -185d → -188d |
| RHD4CZ7C032SL1500 | Luminaire Installation for Lighting Poles for Street Lighting Network - (RD-C-3/2)-Z7-C032-SL | 2027-06-03 → 2027-06-07 (+4d) | 2027-06-06 → 2027-06-09 (+3d) | -185d → -188d |
| 6348 | **RHD4-02-002-C032-(SL)-Street Lighting Earthing System** | 2027-06-01 → 2027-06-05 (+4d) | 2027-06-02 → 2027-06-06 (+4d) |  |
| RHD4CZ7C032SL6100 | Installation of Earthing for Lighting Poles and Fedder Pillers for Street Lighting Network - (RD-C-3/2)-Z7-C032-SL | 2027-06-01 → 2027-06-05 (+4d) | 2027-06-02 → 2027-06-06 (+4d) | -185d → -188d |
| 6354 | **RHD4-02-002-Z7-C032-Telecommunications Network - TC** | 2027-02-14 → 2027-02-06 (-8d) | 2027-06-29 → 2027-07-03 (+4d) |  |
| 6355 | **RHD4-02-002-C032-(TC)-Telecommunications Ducts** | 2027-06-07 → 2027-06-10 (+3d) | 2027-06-29 → 2027-07-03 (+4d) |  |
| RHD4CZ7C032TC2100 | Excavation of HDPE Ducts for Telecom Network - (RD-C-3/2)-Z7-C032-TC | 2027-06-07 → 2027-06-10 (+3d) | 2027-06-13 → 2027-06-16 (+3d) | -185d → -188d |
| RHD4CZ7C032TC2200 | Installation of HDPE Ducts for Telecom Network - (RD-C-3/2)-Z7-C032-TC | 2027-06-14 → 2027-06-17 (+3d) | 2027-06-22 → 2027-06-26 (+4d) | -185d → -188d |
| RHD4CZ7C032TC2400 | Backfilling of HDPE Ducts for Telecom Network - (RD-C-3/2)-Z7-C032-TC | 2027-06-23 → 2027-06-27 (+4d) | 2027-06-29 → 2027-07-03 (+4d) | -185d → -188d |
| 6356 | **RHD4-02-002-C032-(TC)-Telecommunications Manholes** | 2027-06-14 → 2027-06-17 (+3d) | 2027-06-20 → 2027-06-23 (+3d) |  |
| RHD4CZ7C032TC5100 | Excavation for Manholes for Telecom Network - (RD-C-3/2)-Z7-C032-TC | 2027-06-14 → 2027-06-17 (+3d) | 2027-06-16 → 2027-06-20 (+4d) | -183d → -186d |
| RHD4CZ7C032TC5200 | Installation of Manholes for Telecom Network - (RD-C-3/2)-Z7-C032-TC | 2027-06-17 → 2027-06-21 (+4d) | 2027-06-20 → 2027-06-23 (+3d) | -183d → -186d |
| 6357 | **RHD4-02-002-C032-(TC)-Telecomminications Road Crossings** | 2027-02-14 → 2027-02-06 (-8d) | 2027-02-25 → 2027-02-27 (+2d) |  |
| RHD4CZ7C032TC3100 | Excavation for Road Crossings for Telecom Network - (RD-C-3/2)-Z7-C032-TC | 2027-02-14 → 2027-02-06 (-8d) | 2027-02-15 → 2027-02-07 (-8d) | -188d → -181d |
| RHD4CZ7C032TC3200 | Installation of Road Crossings for Telecom Network - (RD-C-3/2)-Z7-C032-TC | 2027-02-16 → 2027-02-17 (+1d) | 2027-02-18 → 2027-02-20 (+2d) | -188d → -189d |
| RHD4CZ7C032TC3300 | Pouring of Road Crossings for Telecom Network - (RD-C-3/2)-Z7-C032-TC | 2027-02-20 → 2027-02-21 (+1d) | 2027-02-23 → 2027-02-24 (+1d) | -188d → -189d |
| RHD4CZ7C032TC3400 | Backfilling of Road Crossings for Telecom Network - (RD-C-3/2)-Z7-C032-TC | 2027-02-24 → 2027-02-25 (+1d) | 2027-02-25 → 2027-02-27 (+2d) | -188d → -189d |
| 6358 | **RHD4-02-002-Z7-C032-Information and Communication Technologies - ICT** | 2027-02-14 → 2027-02-06 (-8d) | 2027-07-28 → 2027-08-01 (+4d) |  |
| 6359 | **RHD4-02-002-C032-(ICT)-Information and Communication Technologies Ducts** | 2027-06-30 → 2027-07-04 (+4d) | 2027-07-28 → 2027-08-01 (+4d) |  |
| RHD4CZ7C032ICT2100 | Excavation of HDPE Ducts for ICT Network - (RD-C-3/2)-Z7-C032-ICT | 2027-06-30 → 2027-07-04 (+4d) | 2027-07-06 → 2027-07-10 (+4d) | -175d → -178d |
| RHD4CZ7C032ICT2200 | Installation of HDPE Ducts for ICT Network - (RD-C-3/2)-Z7-C032-ICT | 2027-07-07 → 2027-07-11 (+4d) | 2027-07-17 → 2027-07-20 (+3d) | -175d → -178d |
| RHD4CZ7C032ICT2400 | Backfilling of HDPE Ducts for ICT Network - (RD-C-3/2)-Z7-C032-ICT | 2027-07-22 → 2027-07-26 (+4d) | 2027-07-28 → 2027-08-01 (+4d) | -175d → -178d |
| 6360 | **RHD4-02-002-C032-(ICT)-Information and Communication Technologies Manholes** | 2027-07-18 → 2027-07-21 (+3d) | 2027-07-21 → 2027-07-25 (+4d) |  |
| RHD4CZ7C032ICT5100 | Excavation for Manholes for ICT Network - (RD-C-3/2)-Z7-C032-ICT | 2027-07-18 → 2027-07-21 (+3d) | 2027-07-19 → 2027-07-22 (+3d) | -175d → -178d |
| RHD4CZ7C032ICT5200 | Installation of Manholes for ICT Network - (RD-C-3/2)-Z7-C032-ICT | 2027-07-20 → 2027-07-24 (+4d) | 2027-07-21 → 2027-07-25 (+4d) | -175d → -178d |
| 6361 | **RHD4-02-002-C032-(ICT)-Information and Communication Technologies Road Crossings** | 2027-02-14 → 2027-02-06 (-8d) | 2027-02-23 → 2027-02-14 (-9d) |  |
| RHD4CZ7C032ICT3100 | Excavation for Road Crossings for ICT Network - (RD-C-3/2)-Z7-C032-ICT | 2027-02-14 → 2027-02-06 (-8d) | 2027-02-15 → 2027-02-07 (-8d) | -186d → -179d |
| RHD4CZ7C032ICT3200 | Installation of Road Crossings for ICT Network - (RD-C-3/2)-Z7-C032-ICT | 2027-02-16 → 2027-02-08 (-8d) | 2027-02-17 → 2027-02-09 (-8d) | -186d → -179d |
| RHD4CZ7C032ICT3300 | Pouring of Road Crossings for ICT Network - (RD-C-3/2)-Z7-C032-ICT | 2027-02-18 → 2027-02-10 (-8d) | 2027-02-20 → 2027-02-11 (-9d) | -186d → -179d |
| RHD4CZ7C032ICT3400 | Backfilling of Road Crossings for ICT Network - (RD-C-3/2)-Z7-C032-ICT | 2027-02-21 → 2027-02-13 (-8d) | 2027-02-23 → 2027-02-14 (-9d) | -186d → -179d |
| 6362 | **RHD4-02-002-Z7-C032-Security Network - CCTV** | 2027-07-29 → 2027-08-02 (+4d) | 2027-08-31 → 2027-09-04 (+4d) |  |
| 6363 | **RHD4-02-002-C032-(CCTV)-Civil Works** | 2027-07-29 → 2027-08-02 (+4d) | 2027-08-03 → 2027-08-07 (+4d) |  |
| RHD4CZ7C032CCTV2100 | Civil Works for Security Network - (RD-C-3/2)-Z7-C032-CCTV | 2027-07-29 → 2027-08-02 (+4d) | 2027-08-03 → 2027-08-07 (+4d) | -175d → -178d |
| 6364 | **RHD4-02-002-C032-(CCTV)-CCTV Poles** | 2027-08-04 → 2027-08-08 (+4d) | 2027-08-15 → 2027-08-18 (+3d) |  |
| RHD4CZ7C032CCTV1100 | Excavation for RC Base for CCTV Poles for Security Network - (RD-C-3/2)-Z7-C032-CCTV | 2027-08-04 → 2027-08-08 (+4d) | 2027-08-05 → 2027-08-09 (+4d) | -175d → -178d |
| RHD4CZ7C032CCTV1200 | Installation for RC Base for CCTV Poles for Security Network - (RD-C-3/2)-Z7-C032-CCTV | 2027-08-07 → 2027-08-10 (+3d) | 2027-08-08 → 2027-08-11 (+3d) | -175d → -178d |
| RHD4CZ7C032CCTV1300 | Backfill for RC Base for CCTV Poles for Security Network - (RD-C-3/2)-Z7-C032-CCTV | 2027-08-09 → 2027-08-12 (+3d) | 2027-08-10 → 2027-08-14 (+4d) | -175d → -178d |
| RHD4CZ7C032CCTV1400 | Installation for CCTV Poles for Security Network - (RD-C-3/2)-Z7-C032-CCTV | 2027-08-11 → 2027-08-15 (+4d) | 2027-08-12 → 2027-08-16 (+4d) | -175d → -178d |
| RHD4CZ7C032CCTV1500 | Protection post Installation for CCTV Poles for Security Network - (RD-C-3/2)-Z7-C032-CCTV | 2027-08-14 → 2027-08-17 (+3d) | 2027-08-15 → 2027-08-18 (+3d) | -175d → -178d |
| 6365 | **RHD4-02-002-C032-(CCTV)-Camera** | 2027-08-16 → 2027-08-19 (+3d) | 2027-08-17 → 2027-08-21 (+4d) |  |
| RHD4CZ7C032CCTV3100 | Installation for Cameras for Security Network - (RD-C-3/2)-Z7-C032-CCTV | 2027-08-16 → 2027-08-19 (+3d) | 2027-08-17 → 2027-08-21 (+4d) | -175d → -178d |
| 6366 | **RHD4-02-002-C032-(CCTV)-Power and Infrastructure** | 2027-08-28 → 2027-08-31 (+3d) | 2027-08-31 → 2027-09-04 (+4d) |  |

| ID | Task | Start | Finish | Complete | Total float |
| --- | --- | --- | --- | --- | --- |
| RHD4CZ7C032CCTV4100 | Installation of Power outlet, UPS and midspan for PTZ Camerafor Cameras for Security Network - (RD-C-3/2)-Z7-C032-CCTV | 2027-08-28 → 2027-08-31 (+3d) | 2027-08-29 → 2027-09-01 (+3d) |  | -175d → -178d |
| RHD4CZ7C032CCTV4200 | Short Range Wireless PoP wireless Bridgefor CCTV Poles for Security Network - (RD-C-3/2)-Z7-C032-CCTV | 2027-08-30 → 2027-09-02 (+3d) | 2027-08-31 → 2027-09-04 (+4d) |  | -175d → -178d |
| 6368 | **RHD4-02-002-C032-(CCTV)-CCTV Panels and Components** | 2027-08-18 → 2027-08-22 (+4d) | 2027-08-26 → 2027-08-30 (+4d) |  |  |
| RHD4CZ7C032CCTV6100 | Installation for CCTV Panels for Security Network - (RD-C-3/2)-Z7-C032-CCTV | 2027-08-18 → 2027-08-22 (+4d) | 2027-08-26 → 2027-08-30 (+4d) |  | -175d → -178d |
| 6379 | **RHD4-02-002-Z7-L03** |  | 2027-12-29 → 2027-12-16 (-13d) |  |  |
| 6558 | **RHD4-02-002-Z7-L03-Road Works - RD** |  | 2027-12-29 → 2027-12-16 (-13d) |  |  |
| 6560 | **RHD4-02-002-L03-(RD)-Aggregate Base Course** | 2027-02-24 → 2027-02-17 (-7d) | 2027-03-02 → 2027-02-24 (-6d) |  |  |
| RHD4CZ7L03RD2100 | Supply, lay and compaction Aggregate base course compacted thickness 300 mmfor Roads - (RD-L-3)-Z7-L03-RD | 2027-02-24 → 2027-02-17 (-7d) | 2027-03-02 → 2027-02-24 (-6d) |  | -167d → -162d |
| 6561 | **RHD4-02-002-L03-(RD)-Bituminous base course Two Layers, including (MC1)&(RC2)** | 2027-03-03 → 2027-02-25 (-6d) | 2027-11-21 → 2027-11-08 (-13d) |  |  |
| RHD4CZ7L03RD3100 | Supply, lay and Asphaltic base course including Prime Coat (MC1) for 1st Layer - (RD-L-3)-Z7-L03-RD | 2027-03-03 → 2027-02-25 (-6d) | 2027-03-04 → 2027-02-27 (-5d) |  | -167d → -162d |
| RHD4CZ7L03RD3200 | Supply, lay and Asphaltic base course including Tack Coat (RC2) for 2nd Layer - (RD-L-3)-Z7-L03-RD | 2027-11-20 → 2027-11-07 (-13d) | 2027-11-21 → 2027-11-08 (-13d) |  | -155d → -144d |
| 6563 | **RHD4-02-002-L03-(RD)-Precast Concrete Curb** | 2027-11-22 → 2027-11-09 (-13d) | 2027-12-01 → 2027-11-18 (-13d) |  |  |
| RHD4CZ7L03RD5100 | Supply and installation Precast Concrete Kerb for Roads - (RD-L-3)-Z7-L03-RD | 2027-11-22 → 2027-11-09 (-13d) | 2027-12-01 → 2027-11-18 (-13d) |  | -155d → -144d |
| 6566 | **RHD4-02-002-L03-(RD)-Traffic Signage** | 2027-12-02 → 2027-11-20 (-12d) | 2027-12-09 → 2027-11-27 (-12d) |  |  |
| RHD4CZ7L03RD8100 | Installation of Traffic Signage for Road Network - (RD-L-3)-Z7-L03-RD | 2027-12-02 → 2027-11-20 (-12d) | 2027-12-09 → 2027-11-27 (-12d) |  | -155d → -144d |
| 6564 | **RHD4-02-002-L03-(RD)-Precast Interlocking Block Pavers** | 2027-12-11 → 2027-11-28 (-13d) | 2027-12-21 → 2027-12-08 (-13d) |  |  |
| RHD4CZ7L03RD6100 | Interlocking block pavers for sidewalk-footpath for Side walks and Parking areas - (RD-L-3)-Z7-L03-RD | 2027-12-11 → 2027-11-28 (-13d) | 2027-12-21 → 2027-12-08 (-13d) |  | -155d → -144d |
| 6562 | **RHD4-02-002-L03-(RD)-Bituminous concrete wearing course including tack coat (RC2)** | 2027-12-22 → 2027-12-09 (-13d) | 2027-12-23 → 2027-12-11 (-12d) |  |  |
| RHD4CZ7L03RD4100 | Supply, lay and compaction Asphaltic wearing course including tack Coat (RC2)for Road Network - (RD-L-3)-Z7-L03-RD | 2027-12-22 → 2027-12-09 (-13d) | 2027-12-23 → 2027-12-11 (-12d) |  | -155d → -144d |
| 6565 | **RHD4-02-002-L03-(RD)-Pavement Marking** | 2027-12-25 → 2027-12-12 (-13d) | 2027-12-29 → 2027-12-16 (-13d) |  |  |
| RHD4CZ7L03RD7100 | Pavement Markings for Road Network - (RD-L-3)-Z7-L03-RD | 2027-12-25 → 2027-12-12 (-13d) | 2027-12-29 → 2027-12-16 (-13d) |  | -155d → -144d |
| 6383 | **RHD4-02-002-Z7-L03-Storm Network - ST** |  | 2027-04-26 → 2027-04-10 (-16d) |  |  |
| 6402 | **RHD4-02-002-L03-(ST)-MH Works - 2000 mm diameter** |  | 2027-04-10 → 2027-03-28 (-13d) |  |  |
| RHD4CZ7L03ST3302 | MH Ring and C.Slab works and Backfilling works for MH 2000 mm - (RD-L-3)-Z7-L03-ST | 2027-04-04 → 2027-03-22 (-13d) | 2027-04-05 → 2027-03-23 (-13d) |  | -92d → -81d |
| RHD4CZ7L03ST3402 | Steel Cover for MH 2000 mm - (RD-L-3)-Z7-L03-ST | 2027-04-06 → 2027-03-24 (-13d) | 2027-04-07 → 2027-03-25 (-13d) |  | -92d → -81d |
| RHD4CZ7L03ST3502 | Finishing, Benching, Testing works for MH 2000 mm - (RD-L-3)-Z7-L03-ST | 2027-04-08 → 2027-03-27 (-12d) | 2027-04-10 → 2027-03-28 (-13d) |  | -92d → -81d |
| 3743 | **RHD4-02-002-L03-(ST)-GRP Pipes - 1100 mm diameter** |  | 2027-04-05 → 2027-03-21 (-15d) |  |  |
| RHD4CZ7L03ST1107 | Excavation works for GRP Pipe Line 1100 mm - (RD-L-3)-Z7-L03-ST |  | 2027-03-29 → 2026-11-12 A (-137d) | 50% → 100% | -157d → none |
| RHD4CZ7L03ST1207 | Bedding works for GRP Pipe Line 1100 mm - (RD-L-3)-Z7-L03-ST |  | 2026-08-08 A → 2026-11-07 A (+91d) |  |  |
| RHD4CZ7L03ST1307 | Installing for GRP Pipe Line 1100 mm - (RD-L-3)-Z7-L03-ST | 2027-03-30 → 2026-11-09 A (-141d) | 2027-03-31 → 2026-11-10 A (-141d) | 0% → 100% | -139d → none |
| RHD4CZ7L03ST1407 | Primary Test for GRP Pipe Line 1100 mm - (RD-L-3)-Z7-L03-ST | 2027-04-01 → 2027-03-17 (-15d) | 2027-04-03 → 2027-03-18 (-16d) |  | -139d → -126d |
| RHD4CZ7L03ST1507 | Backfilling and warning tape works for GRP Pipe Line 1100 mm - (RD-L-3)-Z7-L03-ST | 2027-04-04 → 2027-03-20 (-15d) | 2027-04-05 → 2027-03-21 (-15d) |  | -139d → -126d |
| 5254 | **RHD4-02-002-L03-(ST)-GRP Pipes - 900 mm diameter** |  | 2027-03-31 → 2027-03-18 (-13d) |  |  |
| RHD4CZ7L03ST1405 | Primary Test for GRP Pipe Line 900 mm - (RD-L-3)-Z7-L03-ST | 2027-03-30 → 2027-03-17 (-13d) | 2027-03-31 → 2027-03-18 (-13d) |  | -135d → -124d |
| 6022 | **RHD4-02-002-L03-(ST)-MH Works - 1200 mm diameter** |  | 2027-04-26 → 2027-04-10 (-16d) |  |  |
| RHD4CZ7L03ST3200 | Installation of Base for MH 1200 mm - (RD-L-3)-Z7-L03-ST |  | 2027-04-05 → 2026-11-12 A (-144d) | 65% → 100% | -68d → none |
| RHD4CZ7L03ST3300 | MH Ring and C.Slab works and Backfilling works for MH 1200 mm - (RD-L-3)-Z7-L03-ST | 2027-04-06 → 2027-03-22 (-15d) | 2027-04-07 → 2027-03-23 (-15d) |  | -68d → -55d |
| RHD4CZ7L03ST3400 | Steel Cover for MH 1200 mm - (RD-L-3)-Z7-L03-ST | 2027-04-19 → 2027-04-03 (-16d) | 2027-04-20 → 2027-04-04 (-16d) |  | -77d → -63d |
| RHD4CZ7L03ST3500 | Finishing, Benching, Testing works for MH 1200 mm - (RD-L-3)-Z7-L03-ST | 2027-04-25 → 2027-04-08 (-17d) | 2027-04-26 → 2027-04-10 (-16d) |  | -80d → -66d |
| 6023 | **RHD4-02-002-L03-(ST)-MH Works - 1500 mm diameter** |  | 2027-04-24 → 2027-04-07 (-17d) |  |  |
| RHD4CZ7L03ST3201 | Installation of Base for MH 1500 mm - (RD-L-3)-Z7-L03-ST |  | 2027-04-08 → 2027-03-23 (-16d) | 56% → 89% | -80d → -66d |
| RHD4CZ7L03ST3301 | MH Ring and C.Slab works and Backfilling works for MH 1500 mm - (RD-L-3)-Z7-L03-ST | 2027-04-10 → 2027-03-24 (-17d) | 2027-04-14 → 2027-03-29 (-16d) |  | -80d → -66d |
| RHD4CZ7L03ST3401 | Steel Cover for MH 1500 mm - (RD-L-3)-Z7-L03-ST | 2027-04-15 → 2027-03-30 (-16d) | 2027-04-18 → 2027-04-01 (-17d) |  | -80d → -66d |
| RHD4CZ7L03ST3501 | Finishing, Benching, Testing works for MH 1500 mm - (RD-L-3)-Z7-L03-ST | 2027-04-19 → 2027-04-03 (-16d) | 2027-04-24 → 2027-04-07 (-17d) |  | -80d → -66d |
| 6014 | **RHD4-02-002-L03-(ST)-GRP Pipes - 1200 mm diameter** |  | 2027-02-18 → 2027-02-09 (-9d) |  |  |
| RHD4CZ7L03ST1208 | Bedding works for GRP Pipe Line 1200 mm - (RD-L-3)-Z7-L03-ST | 2027-02-09 → 2026-11-07 A (-94d) | 2027-02-11 → 2026-11-08 A (-95d) | 0% → 100% | -163.02d → none |
| RHD4CZ7L03ST1308 | Installing for GRP Pipe Line 1200 mm - (RD-L-3)-Z7-L03-ST | 2027-02-11 → 2026-11-09 A (-94d) | 2027-02-14 → 2026-11-10 A (-96d) | 0% → 100% | -163.02d → none |
| RHD4CZ7L03ST1408 | Primary Test for GRP Pipe Line 1200 mm - (RD-L-3)-Z7-L03-ST | 2027-02-14 → 2027-02-06 (-8d) | 2027-02-16 → 2027-02-07 (-9d) |  | -163.02d → -156d |
| RHD4CZ7L03ST1508 | Backfilling and warning tape works for GRP Pipe Line 1200 mm - (RD-L-3)-Z7-L03-ST | 2027-02-16 → 2027-02-08 (-8d) | 2027-02-18 → 2027-02-09 (-9d) |  | -163.02d → -156d |
| 6010 | **RHD4-02-002-L03-(ST)-GRP Pipes - 800 mm diameter** |  | 2027-04-11 → 2027-03-29 (-13d) |  |  |
| RHD4CZ7L03ST1104 | Excavation works for GRP Pipe Line 800 mm - (RD-L-3)-Z7-L03-ST |  | 2027-03-31 → 2027-03-18 (-13d) |  | -144d → -133d |
| RHD4CZ7L03ST1204 | Bedding works for GRP Pipe Line 800 mm - (RD-L-3)-Z7-L03-ST |  | 2027-04-03 → 2027-03-21 (-13d) |  | -144d → -133d |
| RHD4CZ7L03ST1304 | Installing for GRP Pipe Line 800 mm - (RD-L-3)-Z7-L03-ST |  | 2027-04-05 → 2027-03-23 (-13d) |  | -144d → -133d |
| RHD4CZ7L03ST1504 | Backfilling and warning tape works for GRP Pipe Line 800 mm - (RD-L-3)-Z7-L03-ST |  | 2027-04-11 → 2027-03-29 (-13d) |  | -144d → -133d |
| RHD4CZ7L03ST1404 | Primary Test for GRP Pipe Line 800 mm - (RD-L-3)-Z7-L03-ST | 2027-04-06 → 2027-03-24 (-13d) | 2027-04-07 → 2027-03-25 (-13d) |  | -144d → -133d |
| 6008 | **RHD4-02-002-L03-(ST)-GRP Pipes - 600 mm diameter** |  | 2027-04-10 → 2027-03-28 (-13d) |  |  |
| RHD4CZ7L03ST1402 | Primary Test for GRP Pipe Line 600 mm - (RD-L-3)-Z7-L03-ST | 2027-04-08 → 2027-03-27 (-12d) | 2027-04-10 → 2027-03-28 (-13d) |  | -143d → -132d |
| 6006 | **RHD4-02-002-L03-(ST)-GRP Pipes - 400 mm diameter** |  | 2027-04-10 → 2027-03-28 (-13d) |  |  |
| RHD4CZ7L03ST1200 | Bedding works for GRP Pipe Line 400 mm - (RD-L-3)-Z7-L03-ST |  | 2027-04-03 → 2027-03-21 (-13d) |  | -95d → -84d |
| RHD4CZ7L03ST1300 | Installing for GRP Pipe Line 400 mm - (RD-L-3)-Z7-L03-ST |  | 2027-04-05 → 2027-03-23 (-13d) |  | -95d → -84d |
| RHD4CZ7L03ST1500 | Backfilling and warning tape works for GRP Pipe Line 400 mm - (RD-L-3)-Z7-L03-ST |  | 2027-04-10 → 2027-03-28 (-13d) |  | -95d → -84d |
| RHD4CZ7L03ST1400 | Primary Test for GRP Pipe Line 400 mm - (RD-L-3)-Z7-L03-ST | 2027-04-06 → 2027-03-24 (-13d) | 2027-04-07 → 2027-03-25 (-13d) |  | -95d → -84d |
| 3739 | **RHD4-02-002-L03-(ST)-GRP Pipes - 700 mm diameter** |  | 2027-04-03 → 2027-03-21 (-13d) |  |  |
| RHD4CZ7L03ST1403 | Primary Test for GRP Pipe Line 700 mm - (RD-L-3)-Z7-L03-ST | 2027-04-01 → 2027-03-20 (-12d) | 2027-04-03 → 2027-03-21 (-13d) |  | -137d → -126d |
| 6398 | **RHD4-02-002-L03-(ST)-UPVC Pipes - 300 mm diameter** |  | 2027-04-12 → 2027-03-30 (-13d) |  |  |
| RHD4CZ7L03ST2100 | Excavation works for UPVC Pipe Line 300 mm - (RD-L-3)-Z7-L03-ST |  | 2027-04-03 → 2027-03-21 (-13d) | 75% → 69% | -94d → -83d |
| RHD4CZ7L03ST2200 | Bedding works for UPVC Pipe Line 300 mm - (RD-L-3)-Z7-L03-ST |  | 2027-04-05 → 2027-03-23 (-13d) | 75% → 69% | -94d → -83d |
| RHD4CZ7L03ST2300 | Installing for UPVC Pipe Line 300 mm - (RD-L-3)-Z7-L03-ST |  | 2027-04-07 → 2027-03-25 (-13d) | 75% → 69% | -94d → -83d |
| RHD4CZ7L03ST2500 | Backfilling and warning tape works for UPVC Pipe Line 300 mm - (RD-L-3)-Z7-L03-ST |  | 2027-04-12 → 2027-03-30 (-13d) | 50% → 69% | -94d → -83d |
| RHD4CZ7L03ST2400 | Primary Test for UPVC Pipe Line 300 mm - (RD-L-3)-Z7-L03-ST | 2027-04-08 → 2027-03-27 (-12d) | 2027-04-10 → 2027-03-28 (-13d) |  | -94d → -83d |

| ID | Task | Start | Finish | Total float |
| --- | --- | --- | --- | --- |
| 6406 | **RHD4-02-002-L03-(ST)-Concrete Encasement** |  | 2027-04-07 → 2027-03-25 (-13d) |  |
| RHD4CZ7L03ST6100 | Pipe Encasement for Storm Pipelines - (RD-L-3)-Z7-L03-ST |  | 2027-04-07 → 2027-03-25 (-13d) | -92d → -81d |
| 6407 | **RHD4-02-002-Z7-L03-Catch Basin - ST** |  | 2027-04-24 → 2027-04-11 (-13d) |  |
| 6408 | **RHD4-02-002-L03-(ST)-Single Catch Basin Works** |  | 2027-04-24 → 2027-04-11 (-13d) |  |
| RHD4CZ7L03ST7100 | Excavation works for Single Catch Basin - (RD-L-3)-Z7-L03-ST |  | 2027-04-06 → 2027-03-24 (-13d) | -92d → -81d |
| RHD4CZ7L03ST7200 | PC Blinding, Installation and Pipe connection for Single Catch Basin - (RD-L-3)-Z7-L03-ST |  | 2027-04-10 → 2027-03-28 (-13d) | -92d → -81d |
| RHD4CZ7L03ST7300 | Rings & C.Slab & Final Backfill for Single Catch Basin - (RD-L-3)-Z7-L03-ST |  | 2027-04-14 → 2027-04-01 (-13d) | -92d → -81d |
| RHD4CZ7L03ST7400 | Steel Cover for Single Catch Basin - (RD-L-3)-Z7-L03-ST | 2027-04-15 → 2027-04-03 (-12d) | 2027-04-18 → 2027-04-05 (-13d) | -92d → -81d |
| RHD4CZ7L03ST7500 | Finishing and Insulation works for Single Catch Basin - (RD-L-3)-Z7-L03-ST | 2027-04-19 → 2027-04-06 (-13d) | 2027-04-24 → 2027-04-11 (-13d) | -92d → -81d |
| 6432 | **RHD4-02-002-Z7-L03-Sewage Network - SW** |  | 2027-06-20 → 2027-06-07 (-13d) |  |
| 1 | **Wash out Chamber for HDPE force Main** | 2027-04-20 → 2027-04-07 (-13d) | 2027-04-27 → 2027-04-14 (-13d) |  |
| RHD4CZ7L03SW4100 | Excavation and Bedding for Wash out Chamber for HDPE force Main - (RD-L-3)-Z7-L03-SW | 2027-04-20 → 2027-04-07 (-13d) | 2027-04-21 → 2027-04-08 (-13d) | -99d → -86d |
| RHD4CZ7L03SW4200 | PC works for Wash out Chamber for HDPE force Main - (RD-L-3)-Z7-L03-SW | 2027-04-22 → 2027-04-09 (-13d) | 2027-04-23 → 2027-04-10 (-13d) | -99d → -86d |
| RHD4CZ7L03SW4300 | Installation for Wash out Chamber for HDPE force Main - (RD-L-3)-Z7-L03-SW | 2027-04-24 → 2027-04-11 (-13d) | 2027-04-25 → 2027-04-12 (-13d) | -99d → -86d |
| RHD4CZ7L03SW4400 | Backfilling works for Wash out Chamber for HDPE force Main - (RD-L-3)-Z7-L03-SW | 2027-04-26 → 2027-04-13 (-13d) | 2027-04-27 → 2027-04-14 (-13d) | -99d → -86d |
| 2 | **Wash out Valves** | 2027-05-05 → 2027-04-22 (-13d) | 2027-05-08 → 2027-04-25 (-13d) |  |
| RHD4CZ7L03SW5100 | Installation for Wash out Valves for HDPE force Main - (RD-L-3)-Z7-L03-SW | 2027-05-05 → 2027-04-22 (-13d) | 2027-05-06 → 2027-04-23 (-13d) | -108d → -95d |
| RHD4CZ7L03SW5200 | Stem and Service box for Wash out Valves for HDPE force Main - (RD-L-3)-Z7-L03-SW | 2027-05-07 → 2027-04-24 (-13d) | 2027-05-08 → 2027-04-25 (-13d) | -108d → -95d |
| 3 | **Air Valves** | 2027-05-05 → 2027-04-22 (-13d) | 2027-05-08 → 2027-04-25 (-13d) |  |
| RHD4CZ7L03SW5101 | Installation for Air Valves for HDPE force Main - (RD-L-3)-Z7-L03-SW | 2027-05-05 → 2027-04-22 (-13d) | 2027-05-06 → 2027-04-23 (-13d) | -108d → -95d |
| RHD4CZ7L03SW5201 | Stem and Service box for Air Valves for HDPE force Main - (RD-L-3)-Z7-L03-SW | 2027-05-07 → 2027-04-24 (-13d) | 2027-05-08 → 2027-04-25 (-13d) | -108d → -95d |
| 4 | **Air Valve Chamber** | 2027-04-20 → 2027-04-07 (-13d) | 2027-04-28 → 2027-04-14 (-14d) |  |
| RHD4CZ7L03SW4101 | Excavation and Bedding for Air Valve Chamber for HDPE force Main - (RD-L-3)-Z7-L03-SW | 2027-04-20 → 2027-04-07 (-13d) | 2027-04-21 → 2027-04-08 (-13d) | -97d → -84d |
| RHD4CZ7L03SW4201 | PC works for Air Valve Chamber for HDPE force Main - (RD-L-3)-Z7-L03-SW | 2027-04-22 → 2027-04-09 (-13d) | 2027-04-23 → 2027-04-10 (-13d) | -97d → -84d |
| RHD4CZ7L03SW4301 | Installation for Air Valve Chamber for HDPE force Main - (RD-L-3)-Z7-L03-SW | 2027-04-24 → 2027-04-11 (-13d) | 2027-04-25 → 2027-04-12 (-13d) | -97d → -84d |
| RHD4CZ7L03SW4401 | Backfilling works for Air Valve Chamber for HDPE force Main - (RD-L-3)-Z7-L03-SW | 2027-04-27 → 2027-04-13 (-14d) | 2027-04-28 → 2027-04-14 (-14d) | -98d → -84d |
| 5 | **Discharge Chamber** | 2027-04-20 → 2027-04-07 (-13d) | 2027-04-27 → 2027-04-14 (-13d) |  |
| RHD4CZ7L03SW4103 | Excavation and Bedding for Discharge Chamber for HDPE force Main - (RD-L-3)-Z7-L03-SW | 2027-04-20 → 2027-04-07 (-13d) | 2027-04-21 → 2027-04-08 (-13d) | -97d → -84d |
| RHD4CZ7L03SW4203 | PC works for Discharge Chamber for HDPE force Main - (RD-L-3)-Z7-L03-SW | 2027-04-22 → 2027-04-09 (-13d) | 2027-04-23 → 2027-04-10 (-13d) | -97d → -84d |
| RHD4CZ7L03SW4303 | Installation for Discharge Chamber for HDPE force Main - (RD-L-3)-Z7-L03-SW | 2027-04-24 → 2027-04-11 (-13d) | 2027-04-25 → 2027-04-12 (-13d) | -97d → -84d |
| RHD4CZ7L03SW4403 | Backfilling works for Discharge Chamber for HDPE force Main - (RD-L-3)-Z7-L03-SW | 2027-04-26 → 2027-04-13 (-13d) | 2027-04-27 → 2027-04-14 (-13d) | -97d → -84d |
| 4358 | **RHD4-02-002-L03-(SW)-HDPE Pipes - 250 mm diameter** | 2027-04-18 → 2027-04-05 (-13d) | 2027-05-13 → 2027-05-01 (-12d) |  |
| RHD4CZ7L03SW2600 | Excavation works for HDPE Force Main Pipeline 250 mm - (RD-L-3)-Z7-L03-SW | 2027-04-18 → 2027-04-05 (-13d) | 2027-04-21 → 2027-04-08 (-13d) | -93d → -82d |
| RHD4CZ7L03SW2700 | Bedding works for HDPE Force Main Pipeline 250 mm - (RD-L-3)-Z7-L03-SW | 2027-04-22 → 2027-04-10 (-12d) | 2027-04-26 → 2027-04-13 (-13d) | -93d → -82d |
| RHD4CZ7L03SW2800 | Installing for HDPE Force Main Pipeline 250 mm - (RD-L-3)-Z7-L03-SW | 2027-04-27 → 2027-04-14 (-13d) | 2027-05-04 → 2027-04-21 (-13d) | -93d → -82d |
| RHD4CZ7L03SW2900 | Primary Test for HDPE Force Main Pipeline 250 mm - (RD-L-3)-Z7-L03-SW | 2027-05-05 → 2027-04-22 (-13d) | 2027-05-08 → 2027-04-25 (-13d) | -93d → -82d |
| RHD4CZ7L03SW3000 | Backfilling and warning tape works for HDPE Force Main Pipeline 250 mm - (RD-L-3)-Z7-L03-SW | 2027-05-09 → 2027-04-26 (-13d) | 2027-05-13 → 2027-05-01 (-12d) | -93d → -82d |
| 6442 | **RHD4-02-002-L03-(SW)-MH Works - 1200 mm diameter** |  | 2027-06-20 → 2027-06-07 (-13d) |  |
| RHD4CZ7L03SW3100 | Excavation and PC Blinding works for MH 1200 mm - (RD-L-3)-Z7-L03-SW |  | 2027-04-24 → 2027-04-11 (-13d) | -72d → -61d |
| RHD4CZ7L03SW3200 | Installation of Base for MH 1200 mm - (RD-L-3)-Z7-L03-SW |  | 2027-04-28 → 2027-04-15 (-13d) | -72d → -61d |
| RHD4CZ7L03SW3300 | MH Ring and C.Slab works and Backfilling works for MH 1200 mm - (RD-L-3)-Z7-L03-SW | 2027-04-29 → 2027-04-17 (-12d) | 2027-05-23 → 2027-05-05 (-18d) | -72d → -61d |
| RHD4CZ7L03SW3400 | Steel Cover for MH 1200 mm - (RD-L-3)-Z7-L03-SW | 2027-05-24 → 2027-05-06 (-18d) | 2027-05-31 → 2027-05-13 (-18d) | -72d → -61d |
| RHD4CZ7L03SW3500 | Finishing, Benching, Testing works for MH 1200 mm - (RD-L-3)-Z7-L03-SW | 2027-06-01 → 2027-05-19 (-13d) | 2027-06-20 → 2027-06-07 (-13d) | -72d → -61d |
| 6434 | **RHD4-02-002-L03-(SW)-GRP Pipes - 400 mm diameter** | 2027-04-13 → 2027-03-31 (-13d) | 2027-04-24 → 2027-04-11 (-13d) |  |
| RHD4CZ7L03SW1101 | Excavation works for GRP Pipe Line 400 mm - (RD-L-3)-Z7-L03-SW | 2027-04-13 → 2027-03-31 (-13d) | 2027-04-14 → 2027-04-01 (-13d) | -94d → -83d |
| RHD4CZ7L03SW1201 | Bedding works for GRP Pipe Line 400 mm - (RD-L-3)-Z7-L03-SW | 2027-04-15 → 2027-04-03 (-12d) | 2027-04-17 → 2027-04-04 (-13d) | -94d → -83d |
| RHD4CZ7L03SW1301 | Installing for GRP Pipe Line 400 mm - (RD-L-3)-Z7-L03-SW | 2027-04-18 → 2027-04-05 (-13d) | 2027-04-19 → 2027-04-06 (-13d) | -94d → -83d |
| RHD4CZ7L03SW1401 | Primary Test for GRP Pipe Line 400 mm - (RD-L-3)-Z7-L03-SW | 2027-04-20 → 2027-04-07 (-13d) | 2027-04-21 → 2027-04-08 (-13d) | -94d → -83d |
| RHD4CZ7L03SW1501 | Backfilling and warning tape works for GRP Pipe Line 400 mm - (RD-L-3)-Z7-L03-SW | 2027-04-22 → 2027-04-10 (-12d) | 2027-04-24 → 2027-04-11 (-13d) | -94d → -83d |
| 6433 | **RHD4-02-002-L03-(SW)-GRP Pipes - 300 mm diameter** |  | 2027-04-26 → 2027-04-13 (-13d) |  |
| RHD4CZ7L03SW1100 | Excavation works for GRP Pipe Line 300 mm - (RD-L-3)-Z7-L03-SW |  | 2027-04-17 → 2027-04-04 (-13d) | -94d → -83d |
| RHD4CZ7L03SW1200 | Bedding works for GRP Pipe Line 300 mm - (RD-L-3)-Z7-L03-SW |  | 2027-04-19 → 2027-04-06 (-13d) | -94d → -83d |
| RHD4CZ7L03SW1300 | Installing for GRP Pipe Line 300 mm - (RD-L-3)-Z7-L03-SW |  | 2027-04-21 → 2027-04-08 (-13d) | -94d → -83d |
| RHD4CZ7L03SW1400 | Primary Test for GRP Pipe Line 300 mm - (RD-L-3)-Z7-L03-SW | 2027-04-22 → 2027-04-10 (-12d) | 2027-04-24 → 2027-04-11 (-13d) | -94d → -83d |
| RHD4CZ7L03SW1500 | Backfilling and warning tape works for GRP Pipe Line 300 mm - (RD-L-3)-Z7-L03-SW | 2027-04-25 → 2027-04-12 (-13d) | 2027-04-26 → 2027-04-13 (-13d) | -94d → -83d |
| 6438 | **RHD4-02-002-L03-(SW)-UPVC Pipes - 200 mm diameter** |  | 2027-04-19 → 2027-04-06 (-13d) |  |
| RHD4CZ7L03SW2400 | Primary Test for UPVC Pipe Line 200 mm - (RD-L-3)-Z7-L03-SW | 2027-04-18 → 2027-04-05 (-13d) | 2027-04-19 → 2027-04-06 (-13d) | -89d → -78d |
| 6469 | **RHD4-02-002-Z7-L03-Potable Network - PT** | 2027-04-20 → 2027-04-07 (-13d) | 2027-07-04 → 2027-06-21 (-13d) |  |
| 6470 | **RHD4-02-002-L03-(PT)-HDPE Pipes - 110 mm diameter** | 2027-04-26 → 2027-04-13 (-13d) | 2027-06-03 → 2027-05-22 (-12d) |  |
| RHD4CZ7L03PT1100 | Excavation works for HDPE Pipline 110 mm - (RD-L-3)-Z7-L03-PT | 2027-04-26 → 2027-04-13 (-13d) | 2027-04-27 → 2027-04-14 (-13d) | -76d → -65d |
| RHD4CZ7L03PT1200 | Bedding works for HDPE Pipline 110 mm - (RD-L-3)-Z7-L03-PT | 2027-05-01 → 2027-04-18 (-13d) | 2027-05-02 → 2027-04-19 (-13d) | -78d → -67d |
| RHD4CZ7L03PT1300 | Installing for HDPE Pipline 110 mm - (RD-L-3)-Z7-L03-PT | 2027-05-09 → 2027-04-26 (-13d) | 2027-05-10 → 2027-04-27 (-13d) | -83d → -72d |
| RHD4CZ7L03PT1400 | Primary Test for HDPE Pipline 110 mm - (RD-L-3)-Z7-L03-PT | 2027-05-26 → 2027-05-09 (-17d) | 2027-05-27 → 2027-05-10 (-17d) | -73d → -62d |
| RHD4CZ7L03PT1500 | Backfilling and warning tape works for HDPE Pipline 110 mm - (RD-L-3)-Z7-L03-PT | 2027-06-02 → 2027-05-20 (-13d) | 2027-06-03 → 2027-05-22 (-12d) | -77d → -66d |
| 6102 | **RHD4-02-002-L03-(PT)-Air Valve Chambers** | 2027-06-12 → 2027-05-30 (-13d) | 2027-06-20 → 2027-06-07 (-13d) |  |
| RHD4CZ7L03PT2102 | Excavation and Bedding for Air Valve Chambers for Potable Water Network - (RD-L-3)-Z7-L03-PT | 2027-06-12 → 2027-05-30 (-13d) | 2027-06-13 → 2027-05-31 (-13d) | -80d → -69d |
| RHD4CZ7L03PT2202 | PC works for Air Valve Chambers for Potable Water Network - (RD-L-3)-Z7-L03-PT | 2027-06-14 → 2027-06-01 (-13d) | 2027-06-15 → 2027-06-02 (-13d) | -80d → -69d |
| RHD4CZ7L03PT2302 | Installation for Air Valve Chambers for Potable Water Network - (RD-L-3)-Z7-L03-PT | 2027-06-16 → 2027-06-03 (-13d) | 2027-06-17 → 2027-06-05 (-12d) | -80d → -69d |
| RHD4CZ7L03PT2402 | Backfilling works for Air Valve Chambers for Potable Water Network - (RD-L-3)-Z7-L03-PT | 2027-06-19 → 2027-06-06 (-13d) | 2027-06-20 → 2027-06-07 (-13d) | -80d → -69d |
| 6103 | **RHD4-02-002-L03-(PT)-Air Valves** | 2027-06-19 → 2027-06-06 (-13d) | 2027-06-22 → 2027-06-09 (-13d) |  |

| ID | Task | Start | Finish | Total float |
| --- | --- | --- | --- | --- |
| RHD4CZ7L03PT3103 | Installation for Air Valves for Potable Water Network - (RD-L-3)-Z7-L03-PT | 2027-06-19 → 2027-06-06 (-13d) | 2027-06-20 → 2027-06-07 (-13d) | -80d → -69d |
| RHD4CZ7L03PT3203 | Stem and Service box for Air Valves for Potable Water Network - (RD-L-3)-Z7-L03-PT | 2027-06-21 → 2027-06-08 (-13d) | 2027-06-22 → 2027-06-09 (-13d) | -80d → -69d |
| 6478 | **RHD4-02-002-L03-(PT)-Wash out Valve Chambers** | 2027-06-02 → 2027-05-20 (-13d) | 2027-06-10 → 2027-05-29 (-12d) |  |
| RHD4CZ7L03PT2101 | Excavation and Bedding for Wash out Valve Chambers for Potable Water Network - (RD-L-3)-Z7-L03-PT | 2027-06-02 → 2027-05-20 (-13d) | 2027-06-03 → 2027-05-22 (-12d) | -83d → -72d |
| RHD4CZ7L03PT2201 | PC works for Wash out Valve Chambers for Potable Water Network - (RD-L-3)-Z7-L03-PT | 2027-06-05 → 2027-05-23 (-13d) | 2027-06-06 → 2027-05-24 (-13d) | -83d → -72d |
| RHD4CZ7L03PT2301 | Installation for Wash out Valve Chambers for Potable Water Network - (RD-L-3)-Z7-L03-PT | 2027-06-07 → 2027-05-25 (-13d) | 2027-06-08 → 2027-05-26 (-13d) | -83d → -72d |
| RHD4CZ7L03PT2401 | Backfilling works for Wash out Valve Chambers for Potable Water Network - (RD-L-3)-Z7-L03-PT | 2027-06-09 → 2027-05-27 (-13d) | 2027-06-10 → 2027-05-29 (-12d) | -83d → -72d |
| 6479 | **RHD4-02-002-L03-(PT)-Wash out Valves** | 2027-06-02 → 2027-05-20 (-13d) | 2027-06-13 → 2027-05-31 (-13d) |  |
| RHD4CZ7L03PT3102 | Installation for Wash out Valves for Potable Water Network - (RD-L-3)-Z7-L03-PT | 2027-06-02 → 2027-05-20 (-13d) | 2027-06-03 → 2027-05-22 (-12d) | -74d → -63d |
| RHD4CZ7L03PT3202 | Stem and Service box for Wash out Valves for Potable Water Network - (RD-L-3)-Z7-L03-PT | 2027-06-12 → 2027-05-30 (-13d) | 2027-06-13 → 2027-05-31 (-13d) | -80d → -69d |
| 6482 | **RHD4-02-002-L03-(PT)-Fire Hydrant** | 2027-06-12 → 2027-05-30 (-13d) | 2027-07-03 → 2027-06-20 (-13d) |  |
| RHD4CZ7L03PT4100 | Excavation and Bedding and Pipe Installation for Fire Hydrant - (RD-L-3)-Z7-L03-PT | 2027-06-12 → 2027-05-30 (-13d) | 2027-06-16 → 2027-06-03 (-13d) | -83d → -72d |
| RHD4CZ7L03PT4200 | Valve Installation for Fire Hydrant - (RD-L-3)-Z7-L03-PT | 2027-06-17 → 2027-06-05 (-12d) | 2027-06-21 → 2027-06-08 (-13d) | -83d → -72d |
| RHD4CZ7L03PT4300 | Stem for Fire Hydrant - (RD-L-3)-Z7-L03-PT | 2027-06-22 → 2027-06-09 (-13d) | 2027-06-26 → 2027-06-13 (-13d) | -83d → -72d |
| RHD4CZ7L03PT4400 | Fire Installation for Fire Hydrant - (RD-L-3)-Z7-L03-PT | 2027-06-27 → 2027-06-14 (-13d) | 2027-06-30 → 2027-06-17 (-13d) | -83d → -72d |
| RHD4CZ7L03PT4500 | Protection Barriers for Fire Hydrant - (RD-L-3)-Z7-L03-PT | 2027-07-01 → 2027-06-19 (-12d) | 2027-07-03 → 2027-06-20 (-13d) | -83d → -72d |
| 6483 | **RHD4-02-002-L03-(PT)-Concrete Encasement** | 2027-05-09 → 2027-04-26 (-13d) | 2027-05-22 → 2027-05-04 (-18d) |  |
| RHD4CZ7L03PT5100 | Pipe Encasement for Potable Pipelines - (RD-L-3)-Z7-L03-PT | 2027-05-09 → 2027-04-26 (-13d) | 2027-05-22 → 2027-05-04 (-18d) | -83d → -72d |
| 6097 | **RHD4-02-002-L03-(PT)-Gate Valves (Direct Buried)** | 2027-06-23 → 2027-06-10 (-13d) | 2027-07-04 → 2027-06-21 (-13d) |  |
| RHD4CZ7L03PT3100 | Installation for Direct Buried Gate Valves - (RD-L-3)-Z7-L03-PT | 2027-06-23 → 2027-06-10 (-13d) | 2027-06-28 → 2027-06-15 (-13d) | -80d → -69d |
| RHD4CZ7L03PT3200 | Stem and Service box for Direct Buried Gate Valves - (RD-L-3)-Z7-L03-PT | 2027-06-29 → 2027-06-16 (-13d) | 2027-07-04 → 2027-06-21 (-13d) | -80d → -69d |
| 6471 | **RHD4-02-002-L03-(PT)-HDPE Pipes - 160 mm diameter** | 2027-04-20 → 2027-04-07 (-13d) | 2027-06-01 → 2027-05-19 (-13d) |  |
| RHD4CZ7L03PT1101 | Excavation works for HDPE Pipline 160 mm - (RD-L-3)-Z7-L03-PT | 2027-04-20 → 2027-04-07 (-13d) | 2027-04-25 → 2027-04-12 (-13d) | -89d → -78d |
| RHD4CZ7L03PT1201 | Bedding works for HDPE Pipline 160 mm - (RD-L-3)-Z7-L03-PT | 2027-04-26 → 2027-04-13 (-13d) | 2027-04-29 → 2027-04-17 (-12d) | -83d → -72d |
| RHD4CZ7L03PT1301 | Installing for HDPE Pipline 160 mm - (RD-L-3)-Z7-L03-PT | 2027-05-01 → 2027-04-18 (-13d) | 2027-05-08 → 2027-04-25 (-13d) | -83d → -72d |
| RHD4CZ7L03PT1401 | Primary Test for HDPE Pipline 160 mm - (RD-L-3)-Z7-L03-PT | 2027-05-23 → 2027-05-05 (-18d) | 2027-05-25 → 2027-05-08 (-17d) | -83d → -72d |
| RHD4CZ7L03PT1501 | Backfilling and warning tape works for HDPE Pipline 160 mm - (RD-L-3)-Z7-L03-PT | 2027-05-26 → 2027-05-09 (-17d) | 2027-06-01 → 2027-05-19 (-13d) | -83d → -72d |
| 6484 | **RHD4-02-002-Z7-L03-Irrigation Network - IRR** | 2027-04-26 → 2027-04-13 (-13d) | 2027-08-14 → 2027-08-10 (-4d) |  |
| 6485 | **RHD4-02-002-L03-(IRR)-HDPE Pipes - 160 mm diameter** | 2027-05-02 → 2027-04-19 (-13d) | 2027-05-12 → 2027-04-29 (-13d) |  |
| RHD4CZ7L03IRR1100 | Excavation works for HDPE Pipline 160 mm - (RD-L-3)-Z7-L03-IRR | 2027-05-02 → 2027-04-19 (-13d) | 2027-05-03 → 2027-04-20 (-13d) | -80d → -69d |
| RHD4CZ7L03IRR1200 | Bedding works for HDPE Pipline 160 mm - (RD-L-3)-Z7-L03-IRR | 2027-05-04 → 2027-04-21 (-13d) | 2027-05-05 → 2027-04-22 (-13d) | -80d → -69d |
| RHD4CZ7L03IRR1300 | Installing for HDPE Pipline 160 mm - (RD-L-3)-Z7-L03-IRR | 2027-05-06 → 2027-04-24 (-12d) | 2027-05-08 → 2027-04-25 (-13d) | -80d → -69d |
| RHD4CZ7L03IRR1400 | Primary Test for HDPE Pipline 160 mm - (RD-L-3)-Z7-L03-IRR | 2027-05-09 → 2027-04-26 (-13d) | 2027-05-10 → 2027-04-27 (-13d) | -80d → -69d |
| RHD4CZ7L03IRR1500 | Backfilling and warning tape works for HDPE Pipline 160 mm - (RD-L-3)-Z7-L03-IRR | 2027-05-11 → 2027-04-28 (-13d) | 2027-05-12 → 2027-04-29 (-13d) | -80d → -69d |
| 6489 | **RHD4-02-002-L03-(IRR)-HDPE Pipes - 315 mm diameter** | 2027-04-26 → 2027-04-13 (-13d) | 2027-05-27 → 2027-05-10 (-17d) |  |
| RHD4CZ7L03IRR1104 | Excavation works for HDPE Pipline 315 mm - (RD-L-3)-Z7-L03-IRR | 2027-04-26 → 2027-04-13 (-13d) | 2027-05-01 → 2027-04-18 (-13d) | -89d → -78d |
| RHD4CZ7L03IRR1204 | Bedding works for HDPE Pipline 315 mm - (RD-L-3)-Z7-L03-IRR | 2027-05-02 → 2027-04-19 (-13d) | 2027-05-06 → 2027-04-24 (-12d) | -89d → -78d |
| RHD4CZ7L03IRR1304 | Installing for HDPE Pipline 315 mm - (RD-L-3)-Z7-L03-IRR | 2027-05-08 → 2027-04-25 (-13d) | 2027-05-12 → 2027-04-29 (-13d) | -89d → -78d |
| RHD4CZ7L03IRR1404 | Primary Test for HDPE Pipline 315 mm - (RD-L-3)-Z7-L03-IRR | 2027-05-13 → 2027-05-01 (-12d) | 2027-05-20 → 2027-05-03 (-17d) | -89d → -78d |
| RHD4CZ7L03IRR1504 | Backfilling and warning tape works for HDPE Pipline 315 mm - (RD-L-3)-Z7-L03-IRR | 2027-05-22 → 2027-05-04 (-18d) | 2027-05-27 → 2027-05-10 (-17d) | -89d → -78d |
| 6493 | **RHD4-02-002-L03-(IRR)-Gate Valves (Direct Buried)** | 2027-05-10 → 2027-04-27 (-13d) | 2027-05-20 → 2027-05-03 (-17d) |  |
| RHD4CZ7L03IRR3100 | Installation for Direct Buried Gate Valves - (RD-L-3)-Z7-L03-IRR | 2027-05-10 → 2027-04-27 (-13d) | 2027-05-12 → 2027-04-29 (-13d) | -78d → -67d |
| RHD4CZ7L03IRR3200 | Stem and Service box for Direct Buried Gate Valves - (RD-L-3)-Z7-L03-IRR | 2027-05-13 → 2027-05-01 (-12d) | 2027-05-20 → 2027-05-03 (-17d) | -78d → -67d |
| 6494 | **RHD4-02-002-L03-(IRR)-Butterfly Valve Chamber** | 2027-05-29 → 2027-05-11 (-18d) | 2027-08-11 → 2027-08-08 (-3d) |  |
| RHD4CZ7L03IRR2100 | Excavation and Bedding for Butterfly Valve Chamber for Irrigation Network - (RD-L-3)-Z7-L03-IRR | 2027-05-29 → 2027-05-11 (-18d) | 2027-05-30 → 2027-05-12 (-18d) | -86d → -75d |
| RHD4CZ7L03IRR2200 | PC works for Butterfly Valve Chamber for Irrigation Network - (RD-L-3)-Z7-L03-IRR | 2027-05-31 → 2027-05-13 (-18d) | 2027-06-01 → 2027-05-19 (-13d) | -86d → -75d |
| RHD4CZ7L03IRR2300 | Installation for Butterfly Valve Chamber for Irrigation Network - (RD-L-3)-Z7-L03-IRR | 2027-06-02 → 2027-05-20 (-13d) | 2027-06-03 → 2027-05-22 (-12d) | -86d → -75d |
| RHD4CZ7L03IRR2400 | Backfilling works for Butterfly Valve Chamber for Irrigation Network - (RD-L-3)-Z7-L03-IRR | 2027-08-09 → 2027-08-07 (-2d) | 2027-08-11 → 2027-08-08 (-3d) | -142.02d → -140d |
| 6495 | **RHD4-02-002-L03-(IRR)-Butterfly Valves** | 2027-06-05 → 2027-05-23 (-13d) | 2027-08-14 → 2027-08-10 (-4d) |  |
| RHD4CZ7L03IRR3101 | Installation for Butterfly Valves for Irrigation Network - (RD-L-3)-Z7-L03-IRR | 2027-06-05 → 2027-05-23 (-13d) | 2027-06-06 → 2027-05-24 (-13d) | -86d → -75d |
| RHD4CZ7L03IRR3201 | Stem and Service box for Butterfly Valves for Irrigation Network - (RD-L-3)-Z7-L03-IRR | 2027-08-11 → 2027-08-09 (-2d) | 2027-08-14 → 2027-08-10 (-4d) | -142.02d → -140d |
| 6498 | **RHD4-02-002-L03-(IRR)-Air Valve Chamber** | 2027-05-29 → 2027-05-11 (-18d) | 2027-06-06 → 2027-05-24 (-13d) |  |
| RHD4CZ7L03IRR2102 | Excavation and Bedding for Valve Chamber for Irrigation Network - (RD-L-3)-Z7-L03-IRR | 2027-05-29 → 2027-05-11 (-18d) | 2027-05-30 → 2027-05-12 (-18d) | -89d → -78d |
| RHD4CZ7L03IRR2202 | PC works for Valve Chamber for Irrigation Network - (RD-L-3)-Z7-L03-IRR | 2027-05-31 → 2027-05-13 (-18d) | 2027-06-01 → 2027-05-19 (-13d) | -89d → -78d |
| RHD4CZ7L03IRR2302 | Installation for Valve Chamber for Irrigation Network - (RD-L-3)-Z7-L03-IRR | 2027-06-02 → 2027-05-20 (-13d) | 2027-06-03 → 2027-05-22 (-12d) | -89d → -78d |
| RHD4CZ7L03IRR2402 | Backfilling works for Valve Chamber for Irrigation Network - (RD-L-3)-Z7-L03-IRR | 2027-06-05 → 2027-05-23 (-13d) | 2027-06-06 → 2027-05-24 (-13d) | -89d → -78d |
| 6499 | **RHD4-02-002-L03-(IRR)-Air Valves** | 2027-06-05 → 2027-05-23 (-13d) | 2027-06-08 → 2027-05-26 (-13d) |  |
| RHD4CZ7L03IRR3103 | Installation for Air Valves for Irrigation Network - (RD-L-3)-Z7-L03-IRR | 2027-06-05 → 2027-05-23 (-13d) | 2027-06-06 → 2027-05-24 (-13d) | -89d → -78d |
| RHD4CZ7L03IRR3203 | Stem and Service box for Air Valves for Irrigation Network - (RD-L-3)-Z7-L03-IRR | 2027-06-07 → 2027-05-25 (-13d) | 2027-06-08 → 2027-05-26 (-13d) | -89d → -78d |
| 6685 | **RHD4-02-002-L03-(IRR)-Wash out Chamber** | 2027-05-02 → 2027-04-19 (-13d) | 2027-05-10 → 2027-04-27 (-13d) |  |
| RHD4CZ7L03IRR2101 | Excavation and Bedding for Wash out Chamber for Irrigation Network - (RD-L-3)-Z7-L03-IRR | 2027-05-02 → 2027-04-19 (-13d) | 2027-05-03 → 2027-04-20 (-13d) | -76d → -65d |
| RHD4CZ7L03IRR2201 | PC works for Wash out Chamber for Irrigation Network - (RD-L-3)-Z7-L03-IRR | 2027-05-04 → 2027-04-21 (-13d) | 2027-05-05 → 2027-04-22 (-13d) | -76d → -65d |
| RHD4CZ7L03IRR2301 | Installation for Wash out Chamber for Irrigation Network - (RD-L-3)-Z7-L03-IRR | 2027-05-06 → 2027-04-24 (-12d) | 2027-05-08 → 2027-04-25 (-13d) | -76d → -65d |
| RHD4CZ7L03IRR2401 | Backfilling works for Wash out Chamber for Irrigation Network - (RD-L-3)-Z7-L03-IRR | 2027-05-09 → 2027-04-26 (-13d) | 2027-05-10 → 2027-04-27 (-13d) | -76d → -65d |
| 6686 | **RHD4-02-002-L03-(IRR)-Wash out Valves** | 2027-05-09 → 2027-04-26 (-13d) | 2027-07-06 → 2027-06-23 (-13d) |  |
| RHD4CZ7L03IRR3102 | Installation for Wash out Valve for Irrigation Network - (RD-L-3)-Z7-L03-IRR | 2027-05-09 → 2027-04-26 (-13d) | 2027-05-10 → 2027-04-27 (-13d) | -76d → -65d |
| RHD4CZ7L03IRR3202 | Stem and Service box for Wash out Valve for Irrigation Network - (RD-L-3)-Z7-L03-IRR | 2027-07-05 → 2027-06-22 (-13d) | 2027-07-06 → 2027-06-23 (-13d) | -80d → -69d |
| 6518 | **RHD4-02-002-Z7-L03-Medium Voltage Network - MV** | 2027-03-06 → 2027-02-28 (-6d) | 2027-09-13 → 2027-09-09 (-4d) |  |
| 6519 | **RHD4-02-002-L03-(MV)-Medium Voltage cable trench** | 2027-07-06 → 2027-07-04 (-2d) | 2027-08-26 → 2027-08-23 (-3d) |  |
| RHD4CZ7L03MV1100 | Excavation for Medium Voltage Trench - (RD-L-3)-Z7-L03-MV | 2027-07-06 → 2027-07-04 (-2d) | 2027-07-24 → 2027-07-20 (-4d) | -150.02d → -148d |

| ID | Task | Start | Finish | Total float |
| --- | --- | --- | --- | --- |
| RHD4CZ7L03MV1200 | Trench Backfilling for Medium Voltage Network - (RD-L-3)-Z7-L03-MV | 2027-08-09 → 2027-08-07 (-2d) | 2027-08-26 → 2027-08-23 (-3d) | -150.02d → -148d |
| 6520 | **RHD4-02-002-L03-(MV)-Medium Voltage duct banks** | 2027-03-06 → 2027-02-28 (-6d) | 2027-03-22 → 2027-03-16 (-6d) |  |
| RHD4CZ7L03MV2100 | Excavation of Duct Banks for Medium Voltage Network - (RD-L-3)-Z7-L03-MV | 2027-03-06 → 2027-02-28 (-6d) | 2027-03-08 → 2027-03-02 (-6d) | -157d → -146d |
| RHD4CZ7L03MV2200 | Installation of Duct Banks for Medium Voltage Network - (RD-L-3)-Z7-L03-MV | 2027-03-13 → 2027-03-03 (-10d) | 2027-03-16 → 2027-03-07 (-9d) | -157d → -146d |
| RHD4CZ7L03MV2300 | Pouring of Duct Banks for Medium Voltage Network - (RD-L-3)-Z7-L03-MV | 2027-03-17 → 2027-03-08 (-9d) | 2027-03-20 → 2027-03-14 (-6d) | -157d → -146d |
| RHD4CZ7L03MV2400 | Backfilling of Duct Banks for Medium Voltage Network - (RD-L-3)-Z7-L03-MV | 2027-03-21 → 2027-03-15 (-6d) | 2027-03-22 → 2027-03-16 (-6d) | -157d → -146d |
| 6521 | **RHD4-02-002-L03-(MV)-Medium Voltage cables 3Cx 500 mm²** | 2027-07-24 → 2027-07-21 (-3d) | 2027-09-13 → 2027-09-09 (-4d) |  |
| RHD4CZ7L03MV3100 | Installation of Medium Voltage Cables 3Cx 500 mm² - (RD-L-3)-Z7-L03-MV | 2027-07-24 → 2027-07-21 (-3d) | 2027-08-04 → 2027-08-01 (-3d) | -150.02d → -148d |
| RHD4CZ7L03MV3200 | Joints Installation of Medium Voltage Cables 3Cx 500 mm² - (RD-L-3)-Z7-L03-MV | 2027-08-04 → 2027-08-02 (-2d) | 2027-08-09 → 2027-08-05 (-4d) | -150.02d → -148d |
| RHD4CZ7L03MV3300 | Testing of Medium Voltage Cables 3Cx 500 mm² - (RD-L-3)-Z7-L03-MV | 2027-08-26 → 2027-08-24 (-2d) | 2027-09-07 → 2027-09-04 (-3d) | -122.02d → -120d |
| RHD4CZ7L03MV3400 | Termination of Medium Voltage Cables 3Cx 500 mm² - (RD-L-3)-Z7-L03-MV | 2027-09-11 → 2027-09-08 (-3d) | 2027-09-13 → 2027-09-09 (-4d) | -125.02d → -123d |
| 6522 | **RHD4-02-002-L03-(MV)-Medium Voltage cables 3Cx 50 mm²** | 2027-07-24 → 2027-07-21 (-3d) | 2027-09-13 → 2027-09-09 (-4d) |  |
| RHD4CZ7L03MV3101 | Installation of Medium Voltage Cables 3Cx 50 mm² - (RD-L-3)-Z7-L03-MV | 2027-07-24 → 2027-07-21 (-3d) | 2027-07-26 → 2027-07-22 (-4d) | -138.02d → -136d |
| RHD4CZ7L03MV3301 | Testing of Medium Voltage Cables 3Cx 50 mm² - (RD-L-3)-Z7-L03-MV | 2027-07-26 → 2027-07-24 (-2d) | 2027-07-28 → 2027-07-25 (-3d) | -87.02d → -85d |
| RHD4CZ7L03MV3401 | Termination of Medium Voltage Cables 3Cx 50 mm² - (RD-L-3)-Z7-L03-MV | 2027-09-11 → 2027-09-08 (-3d) | 2027-09-13 → 2027-09-09 (-4d) | -125.02d → -123d |
| 6523 | **RHD4-02-002-L03-(MV)-Normally open Point (Outdoor Type)** | 2027-08-02 → 2027-07-31 (-2d) | 2027-08-07 → 2027-08-03 (-4d) |  |
| RHD4CZ7L03MV4100 | Installation for Normally open Point - (RD-L-3)-Z7-L03-MV | 2027-08-02 → 2027-07-31 (-2d) | 2027-08-04 → 2027-08-01 (-3d) | -108.02d → -106d |
| RHD4CZ7L03MV4200 | Termination for Normally open Point - (RD-L-3)-Z7-L03-MV | 2027-08-04 → 2027-08-02 (-2d) | 2027-08-07 → 2027-08-03 (-4d) | -108.02d → -106d |
| 6524 | **RHD4-02-002-L03-(MV)-Unit Substations** | 2027-08-26 → 2027-08-24 (-2d) | 2027-09-11 → 2027-09-07 (-4d) |  |
| RHD4CZ7L03MV5100 | Excavation for Unit Substations for Medium Voltage Network - (RD-L-3)-Z7-L03-MV | 2027-08-26 → 2027-08-24 (-2d) | 2027-08-29 → 2027-08-25 (-4d) | -125.02d → -123d |
| RHD4CZ7L03MV5200 | Concrete Base Placement for Unit Substations for Medium Voltage Network - (RD-L-3)-Z7-L03-MV | 2027-08-29 → 2027-08-26 (-3d) | 2027-08-31 → 2027-08-28 (-3d) | -125.02d → -123d |
| RHD4CZ7L03MV5300 | Installation for Fences and doors for Medium Voltage Network - (RD-L-3)-Z7-L03-MV | 2027-08-31 → 2027-08-29 (-2d) | 2027-09-06 → 2027-09-02 (-4d) | -125.02d → -123d |
| RHD4CZ7L03MV5400 | Installation for Unit Substations for Medium Voltage Network - (RD-L-3)-Z7-L03-MV | 2027-09-06 → 2027-09-04 (-2d) | 2027-09-11 → 2027-09-07 (-4d) | -125.02d → -123d |
| 6525 | **RHD4-02-002-Z7-L03-Low Voltage Network - LV** | 2027-03-30 → 2027-03-17 (-13d) | 2027-04-26 → 2027-04-13 (-13d) |  |
| 6527 | **RHD4-02-002-L03-(LV)-Low Voltage Drawpit** | 2027-03-30 → 2027-03-17 (-13d) | 2027-04-03 → 2027-03-21 (-13d) |  |
| RHD4CZ7L03LV5100 | Excavation of Drawpit size 900x900x1000mm for Low Voltage Network - (RD-L-3)-Z7-L03-LV | 2027-03-30 → 2027-03-17 (-13d) | 2027-03-31 → 2027-03-18 (-13d) | -157d → -146d |
| RHD4CZ7L03LV5200 | Installation of Drawpit size 900x900x1000mm for Low Voltage Network - (RD-L-3)-Z7-L03-LV | 2027-04-01 → 2027-03-20 (-12d) | 2027-04-03 → 2027-03-21 (-13d) | -157d → -146d |
| 6528 | **RHD4-02-002-L03-(LV)-Low Voltage cables** | 2027-04-04 → 2027-03-22 (-13d) | 2027-04-19 → 2027-04-06 (-13d) |  |
| RHD4CZ7L03LV3100 | Excavation for Low Voltage Cables for Low Voltage Network - (RD-L-3)-Z7-L03-LV | 2027-04-04 → 2027-03-22 (-13d) | 2027-04-07 → 2027-03-25 (-13d) | -157d → -146d |
| RHD4CZ7L03LV3200 | Cable Laying of Low Voltage Cables for Low Voltage Network - (RD-L-3)-Z7-L03-LV | 2027-04-08 → 2027-03-27 (-12d) | 2027-04-12 → 2027-03-30 (-13d) | -157d → -146d |
| RHD4CZ7L03LV3300 | Warning tape and Backfill for Low Voltage Cables for Low Voltage Network - (RD-L-3)-Z7-L03-LV | 2027-04-13 → 2027-03-31 (-13d) | 2027-04-17 → 2027-04-04 (-13d) | -157d → -146d |
| RHD4CZ7L03LV3400 | Testing of Low Voltage Cables for Low Voltage Network - (RD-L-3)-Z7-L03-LV | 2027-04-18 → 2027-04-05 (-13d) | 2027-04-19 → 2027-04-06 (-13d) | -157d → -146d |
| 6529 | **RHD4-02-002-L03-(LV)-Low Voltage Distribution Pillars** | 2027-04-20 → 2027-04-07 (-13d) | 2027-04-26 → 2027-04-13 (-13d) |  |
| RHD4CZ7L03LV4100 | Leveling for Distribution Pillars for Low Voltage Network - (RD-L-3)-Z7-L03-LV | 2027-04-20 → 2027-04-07 (-13d) | 2027-04-21 → 2027-04-08 (-13d) | -157d → -146d |
| RHD4CZ7L03LV4200 | Lean Concrete for Distribution Pillars for Low Voltage Network - (RD-L-3)-Z7-L03-LV | 2027-04-22 → 2027-04-10 (-12d) | 2027-04-24 → 2027-04-11 (-13d) | -157d → -146d |
| RHD4CZ7L03LV4300 | Installation of Distribution Pillars for Low Voltage Network - (RD-L-3)-Z7-L03-LV | 2027-04-25 → 2027-04-12 (-13d) | 2027-04-26 → 2027-04-13 (-13d) | -157d → -146d |
| 6531 | **RHD4-02-002-Z7-L03-Street Lighting Network - SL** | 2027-03-13 → 2027-03-03 (-10d) | 2027-07-17 → 2027-07-04 (-13d) |  |
| 6532 | **RHD4-02-002-L03-(SL)-Street Lighting duct banks** | 2027-03-13 → 2027-03-03 (-10d) | 2027-03-21 → 2027-03-15 (-6d) |  |
| RHD4CZ7L03SL2100 | Excavation of Duct Banks for Street Lighting Network - (RD-L-3)-Z7-L03-SL | 2027-03-13 → 2027-03-03 (-10d) | 2027-03-14 → 2027-03-04 (-10d) | -156d → -145d |
| RHD4CZ7L03SL2200 | Installation of Duct Banks for Street Lighting Network - (RD-L-3)-Z7-L03-SL | 2027-03-15 → 2027-03-06 (-9d) | 2027-03-16 → 2027-03-07 (-9d) | -156d → -145d |
| RHD4CZ7L03SL2300 | Pouring of Duct Banks for Street Lighting Network - (RD-L-3)-Z7-L03-SL | 2027-03-17 → 2027-03-08 (-9d) | 2027-03-18 → 2027-03-13 (-5d) | -156d → -145d |
| RHD4CZ7L03SL2400 | Backfilling of Duct Banks for Street Lighting Network - (RD-L-3)-Z7-L03-SL | 2027-03-20 → 2027-03-14 (-6d) | 2027-03-21 → 2027-03-15 (-6d) | -156d → -145d |
| 6533 | **RHD4-02-002-L03-(SL)-Street Lighting Drawpit** | 2027-04-27 → 2027-04-14 (-13d) | 2027-05-01 → 2027-04-18 (-13d) |  |
| RHD4CZ7L03SL5100 | Excavation of Drawpit size 600x600x900mm for Street Lighting Network - (RD-L-3)-Z7-L03-SL | 2027-04-27 → 2027-04-14 (-13d) | 2027-04-28 → 2027-04-15 (-13d) | -157d → -146d |
| RHD4CZ7L03SL5200 | Installation of Drawpit size 600x600x900mm for Street Lighting Network - (RD-L-3)-Z7-L03-SL | 2027-04-29 → 2027-04-17 (-12d) | 2027-05-01 → 2027-04-18 (-13d) | -157d → -146d |
| 6534 | **RHD4-02-002-L03-(SL)-Street Lighting cables** | 2027-05-02 → 2027-04-19 (-13d) | 2027-06-13 → 2027-05-31 (-13d) |  |
| RHD4CZ7L03SL3100 | Excavation for Street Lighting Cables for Street Lighting Network - (RD-L-3)-Z7-L03-SL | 2027-05-02 → 2027-04-19 (-13d) | 2027-05-12 → 2027-04-29 (-13d) | -157d → -146d |
| RHD4CZ7L03SL3200 | Cable Laying of Street Lighting Cables for Street Lighting Network - (RD-L-3)-Z7-L03-SL | 2027-05-13 → 2027-05-01 (-12d) | 2027-05-27 → 2027-05-10 (-17d) | -157d → -146d |
| RHD4CZ7L03SL3300 | Warning tape and Backfill for Street Lighting Cables for Street Lighting Network - (RD-L-3)-Z7-L03-SL | 2027-05-29 → 2027-05-11 (-18d) | 2027-06-07 → 2027-05-25 (-13d) | -157d → -146d |
| RHD4CZ7L03SL3400 | Testing of Street Lighting Cables for Street Lighting Network - (RD-L-3)-Z7-L03-SL | 2027-06-08 → 2027-05-26 (-13d) | 2027-06-13 → 2027-05-31 (-13d) | -157d → -146d |
| 6535 | **RHD4-02-002-L03-(SL)-Street Lighting Poles** | 2027-06-14 → 2027-06-01 (-13d) | 2027-07-17 → 2027-07-04 (-13d) |  |
| RHD4CZ7L03SL1100 | Excavation for RC Base for Lighting Poles for Street Lighting Network - (RD-L-3)-Z7-L03-SL | 2027-06-14 → 2027-06-01 (-13d) | 2027-06-19 → 2027-06-06 (-13d) | -157d → -146d |
| RHD4CZ7L03SL1200 | Installation for RC Base for Lighting Poles for Street Lighting Network - (RD-L-3)-Z7-L03-SL | 2027-06-20 → 2027-06-07 (-13d) | 2027-06-24 → 2027-06-12 (-12d) | -157d → -146d |
| RHD4CZ7L03SL1300 | Backfill for RC Base for Lighting Poles for Street Lighting Network - (RD-L-3)-Z7-L03-SL | 2027-06-26 → 2027-06-13 (-13d) | 2027-06-30 → 2027-06-17 (-13d) | -157d → -146d |
| RHD4CZ7L03SL1400 | Installation for Lighting Poles for Street Lighting Network - (RD-L-3)-Z7-L03-SL | 2027-07-01 → 2027-06-19 (-12d) | 2027-07-08 → 2027-06-26 (-12d) | -157d → -146d |
| RHD4CZ7L03SL1500 | Luminaire Installation for Lighting Poles for Street Lighting Network - (RD-L-3)-Z7-L03-SL | 2027-07-12 → 2027-06-29 (-13d) | 2027-07-17 → 2027-07-04 (-13d) | -157d → -146d |
| 6537 | **RHD4-02-002-L03-(SL)-Street Lighting Earthing System** | 2027-07-10 → 2027-06-27 (-13d) | 2027-07-11 → 2027-06-28 (-13d) |  |
| RHD4CZ7L03SL6100 | Installation of Earthing for Lighting Poles and Fedder Pillers for Street Lighting Network - (RD-L-3)-Z7-L03-SL | 2027-07-10 → 2027-06-27 (-13d) | 2027-07-11 → 2027-06-28 (-13d) | -157d → -146d |
| 6543 | **RHD4-02-002-Z7-L03-Telecommunications Network - TC** | 2027-02-09 → 2027-02-06 (-3d) | 2027-08-28 → 2027-08-15 (-13d) |  |
| 6544 | **RHD4-02-002-L03-(TC)-Telecommunications Ducts** | 2027-07-18 → 2027-07-05 (-13d) | 2027-08-28 → 2027-08-15 (-13d) |  |
| RHD4CZ7L03TC2100 | Excavation of HDPE Ducts for Telecom Network - (RD-L-3)-Z7-L03-TC | 2027-07-18 → 2027-07-05 (-13d) | 2027-07-31 → 2027-07-18 (-13d) | -157d → -146d |
| RHD4CZ7L03TC2200 | Installation of HDPE Ducts for Telecom Network - (RD-L-3)-Z7-L03-TC | 2027-08-01 → 2027-07-19 (-13d) | 2027-08-08 → 2027-07-26 (-13d) | -152d → -141d |
| RHD4CZ7L03TC2400 | Backfilling of HDPE Ducts for Telecom Network - (RD-L-3)-Z7-L03-TC | 2027-08-15 → 2027-08-02 (-13d) | 2027-08-28 → 2027-08-15 (-13d) | -157d → -146d |
| 6545 | **RHD4-02-002-L03-(TC)-Telecommunications Manholes** | 2027-08-01 → 2027-07-19 (-13d) | 2027-08-14 → 2027-08-01 (-13d) |  |
| RHD4CZ7L03TC5100 | Excavation for Manholes for Telecom Network - (RD-L-3)-Z7-L03-TC | 2027-08-01 → 2027-07-19 (-13d) | 2027-08-07 → 2027-07-25 (-13d) | -157d → -146d |
| RHD4CZ7L03TC5200 | Installation of Manholes for Telecom Network - (RD-L-3)-Z7-L03-TC | 2027-08-08 → 2027-07-26 (-13d) | 2027-08-14 → 2027-08-01 (-13d) | -157d → -146d |
| 6546 | **RHD4-02-002-L03-(TC)-Telecomminications Road Crossings** | 2027-02-09 → 2027-02-06 (-3d) | 2027-02-21 → 2027-02-16 (-5d) |  |
| RHD4CZ7L03TC3100 | Excavation for Road Crossings for Telecom Network - (RD-L-3)-Z7-L03-TC | 2027-02-09 → 2027-02-06 (-3d) | 2027-02-11 → 2027-02-07 (-4d) | -165.02d → -162d |
| RHD4CZ7L03TC3200 | Installation of Road Crossings for Telecom Network - (RD-L-3)-Z7-L03-TC | 2027-02-11 → 2027-02-08 (-3d) | 2027-02-15 → 2027-02-10 (-5d) | -165.02d → -162d |
| RHD4CZ7L03TC3300 | Pouring of Road Crossings for Telecom Network - (RD-L-3)-Z7-L03-TC | 2027-02-15 → 2027-02-11 (-4d) | 2027-02-18 → 2027-02-14 (-4d) | -165.02d → -162d |

| ID | Task | Start | Finish | Total float |
| --- | --- | --- | --- | --- |
| RHD4CZ7L03TC3400 | Backfilling of Road Crossings for Telecom Network - (RD-L-3)-Z7-L03-TC | 2027-02-18 → 2027-02-15 (-3d) | 2027-02-21 → 2027-02-16 (-5d) | -165.02d → -162d |
| 6547 | **RHD4-02-002-Z7-L03-Information and Communication Technologies - ICT** | 2027-02-09 → 2027-02-06 (-3d) | 2027-10-20 → 2027-10-07 (-13d) |  |
| 6548 | **RHD4-02-002-L03-(ICT)-Information and Communication Technologies Ducts** | 2027-08-29 → 2027-08-16 (-13d) | 2027-10-20 → 2027-10-07 (-13d) |  |
| RHD4CZ7L03ICT2100 | Excavation of HDPE Ducts for ICT Network - (RD-L-3)-Z7-L03-ICT | 2027-08-29 → 2027-08-16 (-13d) | 2027-09-12 → 2027-08-30 (-13d) | -157d → -146d |
| RHD4CZ7L03ICT2200 | Installation of HDPE Ducts for ICT Network - (RD-L-3)-Z7-L03-ICT | 2027-09-13 → 2027-08-31 (-13d) | 2027-10-05 → 2027-09-21 (-14d) | -157d → -146d |
| RHD4CZ7L03ICT2400 | Backfilling of HDPE Ducts for ICT Network - (RD-L-3)-Z7-L03-ICT | 2027-10-06 → 2027-09-22 (-14d) | 2027-10-20 → 2027-10-07 (-13d) | -157d → -146d |
| 6549 | **RHD4-02-002-L03-(ICT)-Information and Communication Technologies Manholes** | 2027-09-13 → 2027-08-31 (-13d) | 2027-09-29 → 2027-09-15 (-14d) |  |
| RHD4CZ7L03ICT5100 | Excavation for Manholes for ICT Network - (RD-L-3)-Z7-L03-ICT | 2027-09-13 → 2027-08-31 (-13d) | 2027-09-20 → 2027-09-07 (-13d) | -152d → -141d |
| RHD4CZ7L03ICT5200 | Installation of Manholes for ICT Network - (RD-L-3)-Z7-L03-ICT | 2027-09-21 → 2027-09-08 (-13d) | 2027-09-29 → 2027-09-15 (-14d) | -152d → -141d |
| 6550 | **RHD4-02-002-L03-(ICT)-Information and Communication Technologies Road Crossings** | 2027-02-09 → 2027-02-06 (-3d) | 2027-02-23 → 2027-02-16 (-7d) |  |
| RHD4CZ7L03ICT3100 | Excavation for Road Crossings for ICT Network - (RD-L-3)-Z7-L03-ICT | 2027-02-09 → 2027-02-06 (-3d) | 2027-02-11 → 2027-02-07 (-4d) | -165.02d → -162d |
| RHD4CZ7L03ICT3200 | Installation of Road Crossings for ICT Network - (RD-L-3)-Z7-L03-ICT | 2027-02-14 → 2027-02-08 (-6d) | 2027-02-16 → 2027-02-10 (-6d) | -167d → -162d |
| RHD4CZ7L03ICT3300 | Pouring of Road Crossings for ICT Network - (RD-L-3)-Z7-L03-ICT | 2027-02-17 → 2027-02-11 (-6d) | 2027-02-20 → 2027-02-14 (-6d) | -167d → -162d |
| RHD4CZ7L03ICT3400 | Backfilling of Road Crossings for ICT Network - (RD-L-3)-Z7-L03-ICT | 2027-02-21 → 2027-02-15 (-6d) | 2027-02-23 → 2027-02-16 (-7d) | -167d → -162d |
| 6551 | **RHD4-02-002-Z7-L03-Security Network - CCTV** | 2027-10-21 → 2027-10-09 (-12d) | 2027-11-18 → 2027-11-06 (-12d) |  |
| 6552 | **RHD4-02-002-L03-(CCTV)-Civil Works** | 2027-10-21 → 2027-10-09 (-12d) | 2027-10-26 → 2027-10-13 (-13d) |  |
| RHD4CZ7L03CCTV2100 | Civil Works for Security Network - (RD-L-3)-Z7-L03-CCTV | 2027-10-21 → 2027-10-09 (-12d) | 2027-10-26 → 2027-10-13 (-13d) | -157d → -146d |
| 6553 | **RHD4-02-002-L03-(CCTV)-CCTV Poles** | 2027-10-27 → 2027-10-14 (-13d) | 2027-11-07 → 2027-10-25 (-13d) |  |
| RHD4CZ7L03CCTV1100 | Excavation for RC Base for CCTV Poles for Security Network - (RD-L-3)-Z7-L03-CCTV | 2027-10-27 → 2027-10-14 (-13d) | 2027-10-28 → 2027-10-16 (-12d) | -157d → -146d |
| RHD4CZ7L03CCTV1200 | Installation for RC Base for CCTV Poles for Security Network - (RD-L-3)-Z7-L03-CCTV | 2027-10-30 → 2027-10-17 (-13d) | 2027-10-31 → 2027-10-18 (-13d) | -157d → -146d |
| RHD4CZ7L03CCTV1300 | Backfill for RC Base for CCTV Poles for Security Network - (RD-L-3)-Z7-L03-CCTV | 2027-11-01 → 2027-10-19 (-13d) | 2027-11-02 → 2027-10-20 (-13d) | -157d → -146d |
| RHD4CZ7L03CCTV1400 | Installation for CCTV Poles for Security Network - (RD-L-3)-Z7-L03-CCTV | 2027-11-03 → 2027-10-21 (-13d) | 2027-11-04 → 2027-10-23 (-12d) | -157d → -146d |
| RHD4CZ7L03CCTV1500 | Protection post Installation for CCTV Poles for Security Network - (RD-L-3)-Z7-L03-CCTV | 2027-11-06 → 2027-10-24 (-13d) | 2027-11-07 → 2027-10-25 (-13d) | -157d → -146d |
| 6554 | **RHD4-02-002-L03-(CCTV)-Camera** | 2027-11-08 → 2027-10-26 (-13d) | 2027-11-09 → 2027-10-27 (-13d) |  |
| RHD4CZ7L03CCTV3100 | Installation for Cameras for Security Network - (RD-L-3)-Z7-L03-CCTV | 2027-11-08 → 2027-10-26 (-13d) | 2027-11-09 → 2027-10-27 (-13d) | -155d → -144d |
| 6555 | **RHD4-02-002-L03-(CCTV)-Power and Infrastructure** | 2027-11-06 → 2027-10-24 (-13d) | 2027-11-09 → 2027-10-27 (-13d) |  |
| RHD4CZ7L03CCTV4100 | Installation of Power outlet, UPS and midspan for PTZ Camerafor Cameras for Security Network - (RD-L-3)-Z7-L03-CCTV | 2027-11-06 → 2027-10-24 (-13d) | 2027-11-07 → 2027-10-25 (-13d) | -155d → -144d |
| RHD4CZ7L03CCTV4200 | Short Range Wireless PoP wireless Bridgefor CCTV Poles for Security Network - (RD-L-3)-Z7-L03-CCTV | 2027-11-08 → 2027-10-26 (-13d) | 2027-11-09 → 2027-10-27 (-13d) | -155d → -144d |
| 6557 | **RHD4-02-002-L03-(CCTV)-CCTV Panels and Components** | 2027-11-10 → 2027-10-28 (-13d) | 2027-11-18 → 2027-11-06 (-12d) |  |
| RHD4CZ7L03CCTV6100 | Installation for CCTV Panels for Security Network - (RD-L-3)-Z7-L03-CCTV | 2027-11-10 → 2027-10-28 (-13d) | 2027-11-18 → 2027-11-06 (-12d) | -155d → -144d |
| 6757 | **RHD4-02-002-Z7-L131** |  | 2028-01-22 → 2028-01-18 (-4d) |  |
| 6936 | **RHD4-02-002-Z7-L131-Road Works - RD** | 2027-02-14 → 2027-02-10 (-4d) | 2028-01-19 → 2028-01-16 (-3d) |  |
| 6937 | **RHD4-02-002-L131-(RD)-Subgrade** | 2027-02-14 → 2027-02-10 (-4d) | 2027-02-23 → 2027-02-17 (-6d) |  |
| RHD4CZ7L131RD1100 | Supply, lay and compaction subgrade compacted thickness 300 mm for Roads - (RD-L-13/1)-Z7-L131-RD | 2027-02-14 → 2027-02-10 (-4d) | 2027-02-23 → 2027-02-17 (-6d) | -183.02d → -180d |
| 6938 | **RHD4-02-002-L131-(RD)-Aggregate Base Course** | 2027-02-23 → 2027-02-18 (-5d) | 2027-03-02 → 2027-02-25 (-5d) |  |
| RHD4CZ7L131RD2100 | Supply, lay and compaction Aggregate base course compacted thickness 300 mmfor Roads - (RD-L-13/1)-Z7-L131-RD | 2027-02-23 → 2027-02-18 (-5d) | 2027-03-02 → 2027-02-25 (-5d) | -183.02d → -180d |
| 6939 | **RHD4-02-002-L131-(RD)-Bituminous base course Two Layers, including (MC1)&(RC2)** | 2027-03-02 → 2027-02-27 (-3d) | 2027-11-23 → 2027-11-10 (-13d) |  |
| RHD4CZ7L131RD3100 | Supply, lay and Asphaltic base course including Prime Coat (MC1) for 1st Layer - (RD-L-13/1)-Z7-L131-RD | 2027-03-02 → 2027-02-27 (-3d) | 2027-03-04 → 2027-02-28 (-4d) | -183.02d → -180d |
| RHD4CZ7L131RD3200 | Supply, lay and Asphaltic base course including Tack Coat (RC2) for 2nd Layer - (RD-L-13/1)-Z7-L131-RD | 2027-11-22 → 2027-11-09 (-13d) | 2027-11-23 → 2027-11-10 (-13d) | -141d → -130d |
| 6941 | **RHD4-02-002-L131-(RD)-Precast Concrete Curb** | 2027-12-02 → 2027-11-20 (-12d) | 2027-12-08 → 2027-11-25 (-13d) |  |
| RHD4CZ7L131RD5100 | Supply and installation Precast Concrete Kerb for Roads - (RD-L-13/1)-Z7-L131-RD | 2027-12-02 → 2027-11-20 (-12d) | 2027-12-08 → 2027-11-25 (-13d) | -130d → -119d |
| 6944 | **RHD4-02-002-L131-(RD)-Traffic Signage** | 2027-12-23 → 2027-12-21 (-2d) | 2027-12-30 → 2027-12-27 (-3d) |  |
| RHD4CZ7L131RD8100 | Installation of Traffic Signage for Road Network - (RD-L-13/1)-Z7-L131-RD | 2027-12-23 → 2027-12-21 (-2d) | 2027-12-30 → 2027-12-27 (-3d) | -142.02d → -140d |
| 6942 | **RHD4-02-002-L131-(RD)-Precast Interlocking Block Pavers** | 2027-12-30 → 2027-12-28 (-2d) | 2028-01-05 → 2028-01-02 (-3d) |  |
| RHD4CZ7L131RD6100 | Interlocking block pavers for sidewalk-footpath for Side walks and Parking areas - (RD-L-13/1)-Z7-L131-RD | 2027-12-30 → 2027-12-28 (-2d) | 2028-01-05 → 2028-01-02 (-3d) | -142.02d → -140d |
| 6940 | **RHD4-02-002-L131-(RD)-Bituminous concrete wearing course including tack coat (RC2)** | 2028-01-12 → 2028-01-10 (-2d) | 2028-01-15 → 2028-01-11 (-4d) |  |
| RHD4CZ7L131RD4100 | Supply, lay and compaction Asphaltic wearing course including tack Coat (RC2)for Road Network - (RD-L-13/1)-Z7-L131-RD | 2028-01-12 → 2028-01-10 (-2d) | 2028-01-15 → 2028-01-11 (-4d) | -148.02d → -146d |
| 6943 | **RHD4-02-002-L131-(RD)-Pavement Marking** | 2028-01-15 → 2028-01-12 (-3d) | 2028-01-19 → 2028-01-16 (-3d) |  |
| RHD4CZ7L131RD7100 | Pavement Markings for Road Network - (RD-L-13/1)-Z7-L131-RD | 2028-01-15 → 2028-01-12 (-3d) | 2028-01-19 → 2028-01-16 (-3d) | -148.02d → -146d |
| 6761 | **RHD4-02-002-Z7-L131-Storm Network - ST** |  | 2027-05-06 → 2027-04-21 (-15d) |  |
| 6779 | **RHD4-02-002-L131-(ST)-MH Works - 1500 mm diameter** |  | 2027-05-06 → 2027-04-21 (-15d) |  |
| RHD4CZ7L131ST3201 | Installation of Base for MH 1500 mm - (RD-L-13/1)-Z7-L131-ST |  | 2027-04-18 → 2027-04-03 (-15d) | -98d → -85d |
| RHD4CZ7L131ST3301 | MH Ring and C.Slab works and Backfilling works for MH 1500 mm - (RD-L-13/1)-Z7-L131-ST | 2027-04-19 → 2027-04-04 (-15d) | 2027-04-25 → 2027-04-10 (-15d) | -98d → -85d |
| RHD4CZ7L131ST3401 | Steel Cover for MH 1500 mm - (RD-L-13/1)-Z7-L131-ST | 2027-04-26 → 2027-04-11 (-15d) | 2027-04-29 → 2027-04-14 (-15d) | -98d → -85d |
| RHD4CZ7L131ST3501 | Finishing, Benching, Testing works for MH 1500 mm - (RD-L-13/1)-Z7-L131-ST | 2027-05-01 → 2027-04-15 (-16d) | 2027-05-06 → 2027-04-21 (-15d) | -98d → -85d |
| 6008 | **RHD4-02-002-L131-(ST)-GRP Pipes - 600 mm diameter** | 2027-04-12 → 2027-03-28 (-15d) | 2027-04-22 → 2027-04-07 (-15d) |  |
| RHD4CZ7L131ST1102 | Excavation works for GRP Pipe Line 600 mm - (RD-L-13/1)-Z7-L131-ST | 2027-04-12 → 2027-03-28 (-15d) | 2027-04-13 → 2027-03-29 (-15d) | -111d → -98d |
| RHD4CZ7L131ST1202 | Bedding works for GRP Pipe Line 600 mm - (RD-L-13/1)-Z7-L131-ST | 2027-04-14 → 2027-03-30 (-15d) | 2027-04-15 → 2027-03-31 (-15d) | -74d → -61d |
| RHD4CZ7L131ST1302 | Installing for GRP Pipe Line 600 mm - (RD-L-13/1)-Z7-L131-ST | 2027-04-17 → 2027-04-01 (-16d) | 2027-04-18 → 2027-04-03 (-15d) | -74d → -61d |
| RHD4CZ7L131ST1402 | Primary Test for GRP Pipe Line 600 mm - (RD-L-13/1)-Z7-L131-ST | 2027-04-19 → 2027-04-04 (-15d) | 2027-04-20 → 2027-04-05 (-15d) | -74d → -61d |
| RHD4CZ7L131ST1502 | Backfilling and warning tape works for GRP Pipe Line 600 mm - (RD-L-13/1)-Z7-L131-ST | 2027-04-21 → 2027-04-06 (-15d) | 2027-04-22 → 2027-04-07 (-15d) | -74d → -61d |
| 6022 | **RHD4-02-002-L131-(ST)-MH Works - 1200 mm diameter** |  | 2027-04-27 → 2027-04-12 (-15d) |  |
| RHD4CZ7L131ST3200 | Installation of Base for MH 1200 mm - (RD-L-13/1)-Z7-L131-ST |  | 2027-04-20 → 2027-04-05 (-15d) | -74d → -61d |
| RHD4CZ7L131ST3100 | Excavation and PC Blinding works for MH 1200 mm - (RD-L-13/1)-Z7-L131-ST | 2027-04-17 → 2027-04-01 (-16d) | 2027-04-18 → 2027-04-03 (-15d) | -105d → -92d |
| RHD4CZ7L131ST3300 | MH Ring and C.Slab works and Backfilling works for MH 1200 mm - (RD-L-13/1)-Z7-L131-ST | 2027-04-21 → 2027-04-06 (-15d) | 2027-04-22 → 2027-04-07 (-15d) | -74d → -61d |
| RHD4CZ7L131ST3400 | Steel Cover for MH 1200 mm - (RD-L-13/1)-Z7-L131-ST | 2027-04-24 → 2027-04-08 (-16d) | 2027-04-25 → 2027-04-10 (-15d) | -74d → -61d |
| RHD4CZ7L131ST3500 | Finishing, Benching, Testing works for MH 1200 mm - (RD-L-13/1)-Z7-L131-ST | 2027-04-26 → 2027-04-11 (-15d) | 2027-04-27 → 2027-04-12 (-15d) | -74d → -61d |
| 6767 | **RHD4-02-002-L131-(ST)-GRP Pipes - 900 mm diameter** |  | 2027-02-14 → 2027-02-09 (-5d) |  |
| RHD4CZ7L131ST1405 | Primary Test for GRP Pipe Line 900 mm - (RD-L-13/1)-Z7-L131-ST | 2027-02-09 → 2027-02-06 (-3d) | 2027-02-11 → 2027-02-07 (-4d) | -183.02d → -180d |
| RHD4CZ7L131ST1505 | Backfilling and warning tape works for GRP Pipe Line 900 mm - (RD-L-13/1)-Z7-L131-ST | 2027-02-11 → 2027-02-08 (-3d) | 2027-02-14 → 2027-02-09 (-5d) | -183.02d → -180d |

| ID | Task | Start | Finish | Total float |
| --- | --- | --- | --- | --- |
| 6766 | **RHD4-02-002-L131-(ST)-GRP Pipes - 800 mm diameter** |  | 2027-04-20 → 2027-04-05 (-15d) |  |
| RHD4CZ7L131ST1104 | Excavation works for GRP Pipe Line 800 mm - (RD-L-13/1)-Z7-L131-ST |  | 2027-04-08 → 2027-03-24 (-15d) | -111d → -98d |
| RHD4CZ7L131ST1204 | Bedding works for GRP Pipe Line 800 mm - (RD-L-13/1)-Z7-L131-ST |  | 2027-04-12 → 2027-03-28 (-15d) | -98d → -88d |
| RHD4CZ7L131ST1304 | Installing for GRP Pipe Line 800 mm - (RD-L-13/1)-Z7-L131-ST |  | 2027-04-14 → 2027-03-30 (-15d) | -98d → -88d |
| RHD4CZ7L131ST1504 | Backfilling and warning tape works for GRP Pipe Line 800 mm - (RD-L-13/1)-Z7-L131-ST |  | 2027-04-20 → 2027-04-05 (-15d) | -98d → -88d |
| RHD4CZ7L131ST1404 | Primary Test for GRP Pipe Line 800 mm - (RD-L-13/1)-Z7-L131-ST | 2027-04-15 → 2027-03-31 (-15d) | 2027-04-17 → 2027-04-01 (-16d) | -98d → -88d |
| 6765 | **RHD4-02-002-L131-(ST)-GRP Pipes - 700 mm diameter** |  | 2027-04-25 → 2027-04-10 (-15d) |  |
| RHD4CZ7L131ST1103 | Excavation works for GRP Pipe Line 700 mm - (RD-L-13/1)-Z7-L131-ST |  | 2027-04-11 → 2027-03-27 (-15d) | -111d → -98d |
| RHD4CZ7L131ST1203 | Bedding works for GRP Pipe Line 700 mm - (RD-L-13/1)-Z7-L131-ST |  | 2027-04-13 → 2027-03-29 (-15d) | -70d → -57d |
| RHD4CZ7L131ST1303 | Installing for GRP Pipe Line 700 mm - (RD-L-13/1)-Z7-L131-ST |  | 2027-04-17 → 2027-04-01 (-16d) | -71d → -58d |
| RHD4CZ7L131ST1403 | Primary Test for GRP Pipe Line 700 mm - (RD-L-13/1)-Z7-L131-ST | 2027-04-18 → 2027-04-03 (-15d) | 2027-04-19 → 2027-04-04 (-15d) | -71d → -58d |
| RHD4CZ7L131ST1503 | Backfilling and warning tape works for GRP Pipe Line 700 mm - (RD-L-13/1)-Z7-L131-ST | 2027-04-24 → 2027-04-08 (-16d) | 2027-04-25 → 2027-04-10 (-15d) | -74d → -61d |
| 6776 | **RHD4-02-002-L131-(ST)-UPVC Pipes - 300 mm diameter** |  | 2027-04-29 → 2027-04-14 (-15d) |  |
| RHD4CZ7L131ST2100 | Excavation works for UPVC Pipe Line 300 mm - (RD-L-13/1)-Z7-L131-ST |  | 2027-04-15 → 2027-03-31 (-15d) | -111d → -98d |
| RHD4CZ7L131ST2200 | Bedding works for UPVC Pipe Line 300 mm - (RD-L-13/1)-Z7-L131-ST | 2027-04-17 → 2027-04-01 (-16d) | 2027-04-18 → 2027-04-03 (-15d) | -94d → -81d |
| RHD4CZ7L131ST2300 | Installing for UPVC Pipe Line 300 mm - (RD-L-13/1)-Z7-L131-ST | 2027-04-24 → 2027-04-08 (-16d) | 2027-04-25 → 2027-04-10 (-15d) | -98d → -85d |
| RHD4CZ7L131ST2400 | Primary Test for UPVC Pipe Line 300 mm - (RD-L-13/1)-Z7-L131-ST | 2027-04-26 → 2027-04-11 (-15d) | 2027-04-27 → 2027-04-12 (-15d) | -98d → -85d |
| RHD4CZ7L131ST2500 | Backfilling and warning tape works for UPVC Pipe Line 300 mm - (RD-L-13/1)-Z7-L131-ST | 2027-04-28 → 2027-04-13 (-15d) | 2027-04-29 → 2027-04-14 (-15d) | -98d → -85d |
| 6784 | **RHD4-02-002-L131-(ST)-Concrete Encasement** | 2027-04-24 → 2027-04-08 (-16d) | 2027-04-25 → 2027-04-10 (-15d) |  |
| RHD4CZ7L131ST6100 | Pipe Encasement for Storm Pipelines - (RD-L-13/1)-Z7-L131-ST | 2027-04-24 → 2027-04-08 (-16d) | 2027-04-25 → 2027-04-10 (-15d) | -96d → -83d |
| 6785 | **RHD4-02-002-Z7-L131-Catch Basin - ST** | 2027-04-17 → 2027-04-01 (-16d) | 2027-04-28 → 2027-04-13 (-15d) |  |
| 6786 | **RHD4-02-002-L131-(ST)-Single Catch Basin Works** | 2027-04-17 → 2027-04-01 (-16d) | 2027-04-28 → 2027-04-13 (-15d) |  |
| RHD4CZ7L131ST7100 | Excavation works for Single Catch Basin - (RD-L-13/1)-Z7-L131-ST | 2027-04-17 → 2027-04-01 (-16d) | 2027-04-18 → 2027-04-03 (-15d) | -111d → -98d |
| RHD4CZ7L131ST7200 | PC Blinding, Installation and Pipe connection for Single Catch Basin - (RD-L-13/1)-Z7-L131-ST | 2027-04-19 → 2027-04-04 (-15d) | 2027-04-20 → 2027-04-05 (-15d) | -111d → -98d |
| RHD4CZ7L131ST7300 | Rings & C.Slab & Final Backfill for Single Catch Basin - (RD-L-13/1)-Z7-L131-ST | 2027-04-21 → 2027-04-06 (-15d) | 2027-04-22 → 2027-04-07 (-15d) | -111d → -98d |
| RHD4CZ7L131ST7400 | Steel Cover for Single Catch Basin - (RD-L-13/1)-Z7-L131-ST | 2027-04-24 → 2027-04-08 (-16d) | 2027-04-25 → 2027-04-10 (-15d) | -111d → -98d |
| RHD4CZ7L131ST7500 | Finishing and Insulation works for Single Catch Basin - (RD-L-13/1)-Z7-L131-ST | 2027-04-26 → 2027-04-11 (-15d) | 2027-04-28 → 2027-04-13 (-15d) | -111d → -98d |
| 6810 | **RHD4-02-002-Z7-L131-Sewage Network - SW** |  | 2027-06-22 → 2027-06-07 (-15d) |  |
| 6442 | **RHD4-02-002-L131-(SW)-MH Works - 1200 mm diameter** | 2027-04-29 → 2027-04-14 (-15d) | 2027-06-22 → 2027-06-07 (-15d) |  |
| RHD4CZ7L131SW3100 | Excavation and PC Blinding works for MH 1200 mm - (RD-L-13/1)-Z7-L131-SW | 2027-04-29 → 2027-04-14 (-15d) | 2027-05-05 → 2027-04-20 (-15d) | -111d → -98d |
| RHD4CZ7L131SW3200 | Installation of Base for MH 1200 mm - (RD-L-13/1)-Z7-L131-SW | 2027-05-06 → 2027-04-21 (-15d) | 2027-05-23 → 2027-05-03 (-20d) | -109d → -96d |
| RHD4CZ7L131SW3300 | MH Ring and C.Slab works and Backfilling works for MH 1200 mm - (RD-L-13/1)-Z7-L131-SW | 2027-05-24 → 2027-05-04 (-20d) | 2027-06-05 → 2027-05-20 (-16d) | -109d → -96d |
| RHD4CZ7L131SW3400 | Steel Cover for MH 1200 mm - (RD-L-13/1)-Z7-L131-SW | 2027-06-06 → 2027-05-22 (-15d) | 2027-06-09 → 2027-05-25 (-15d) | -106d → -93d |
| RHD4CZ7L131SW3500 | Finishing, Benching, Testing works for MH 1200 mm - (RD-L-13/1)-Z7-L131-SW | 2027-06-10 → 2027-05-26 (-15d) | 2027-06-22 → 2027-06-07 (-15d) | -106d → -93d |
| 957 | **RHD4-02-002-L131-(SW)-MH Works - 1200 mm diameter with Back drop** | 2027-05-06 → 2027-04-21 (-15d) | 2027-05-22 → 2027-05-02 (-20d) |  |
| RHD4CZ7L131SW3101 | Excavation and PC Blinding works for MH 1200 mm - (RD-L-13/1)-Z7-L131-SW | 2027-05-06 → 2027-04-21 (-15d) | 2027-05-08 → 2027-04-22 (-16d) | -111d → -98d |
| RHD4CZ7L131SW3201 | Installation of Base for MH 1200 mm - (RD-L-13/1)-Z7-L131-SW | 2027-05-09 → 2027-04-24 (-15d) | 2027-05-10 → 2027-04-25 (-15d) | -111d → -98d |
| RHD4CZ7L131SW3301 | MH Ring and C.Slab works and Backfilling works for MH 1200 mm - (RD-L-13/1)-Z7-L131-SW | 2027-05-11 → 2027-04-26 (-15d) | 2027-05-12 → 2027-04-27 (-15d) | -111d → -98d |
| RHD4CZ7L131SW3401 | Steel Cover for MH 1200 mm - (RD-L-13/1)-Z7-L131-SW | 2027-05-13 → 2027-04-28 (-15d) | 2027-05-19 → 2027-04-29 (-20d) | -111d → -98d |
| RHD4CZ7L131SW3501 | Finishing, Benching, Testing works for MH 1200 mm - (RD-L-13/1)-Z7-L131-SW | 2027-05-20 → 2027-05-01 (-19d) | 2027-05-22 → 2027-05-02 (-20d) | -111d → -98d |
| 6434 | **RHD4-02-002-L131-(SW)-GRP Pipes - 400 mm diameter** |  | 2027-06-19 → 2027-06-03 (-16d) |  |
| RHD4CZ7L131SW1201 | Bedding works for GRP Pipe Line 400 mm - (RD-L-13/1)-Z7-L131-SW |  | 2027-05-03 → 2027-04-18 (-15d) | -97d → -84d |
| RHD4CZ7L131SW1301 | Installing for GRP Pipe Line 400 mm - (RD-L-13/1)-Z7-L131-SW |  | 2027-06-09 → 2027-05-25 (-15d) | -109d → -96d |
| RHD4CZ7L131SW1401 | Primary Test for GRP Pipe Line 400 mm - (RD-L-13/1)-Z7-L131-SW | 2027-06-10 → 2027-05-26 (-15d) | 2027-06-14 → 2027-05-30 (-15d) | -109d → -96d |
| RHD4CZ7L131SW1501 | Backfilling and warning tape works for GRP Pipe Line 400 mm - (RD-L-13/1)-Z7-L131-SW | 2027-06-15 → 2027-05-31 (-15d) | 2027-06-19 → 2027-06-03 (-16d) | -109d → -96d |
| 6438 | **RHD4-02-002-L131-(SW)-UPVC Pipes - 200 mm diameter** | 2027-04-29 → 2027-04-14 (-15d) | 2027-05-10 → 2027-04-25 (-15d) |  |
| RHD4CZ7L131SW2100 | Excavation works for UPVC Pipe Line 200 mm - (RD-L-13/1)-Z7-L131-SW | 2027-04-29 → 2027-04-14 (-15d) | 2027-05-01 → 2027-04-15 (-16d) | -84d → -71d |
| RHD4CZ7L131SW2200 | Bedding works for UPVC Pipe Line 200 mm - (RD-L-13/1)-Z7-L131-SW | 2027-05-02 → 2027-04-17 (-15d) | 2027-05-03 → 2027-04-18 (-15d) | -84d → -71d |
| RHD4CZ7L131SW2300 | Installing for UPVC Pipe Line 200 mm - (RD-L-13/1)-Z7-L131-SW | 2027-05-04 → 2027-04-19 (-15d) | 2027-05-05 → 2027-04-20 (-15d) | -84d → -71d |
| RHD4CZ7L131SW2400 | Primary Test for UPVC Pipe Line 200 mm - (RD-L-13/1)-Z7-L131-SW | 2027-05-06 → 2027-04-21 (-15d) | 2027-05-08 → 2027-04-22 (-16d) | -84d → -71d |
| RHD4CZ7L131SW2500 | Backfilling and warning tape works for UPVC Pipe Line 200 mm - (RD-L-13/1)-Z7-L131-SW | 2027-05-09 → 2027-04-24 (-15d) | 2027-05-10 → 2027-04-25 (-15d) | -84d → -71d |
| 6847 | **RHD4-02-002-Z7-L131-Potable Network - PT** | 2027-05-23 → 2027-05-03 (-20d) | 2027-07-12 → 2027-06-27 (-15d) |  |
| 6848 | **RHD4-02-002-L131-(PT)-HDPE Pipes - 110 mm diameter** | 2027-05-26 → 2027-05-06 (-20d) | 2027-06-23 → 2027-06-08 (-15d) |  |
| RHD4CZ7L131PT1100 | Excavation works for HDPE Pipline 110 mm - (RD-L-13/1)-Z7-L131-PT | 2027-05-26 → 2027-05-06 (-20d) | 2027-05-27 → 2027-05-08 (-19d) | -110d → -97d |
| RHD4CZ7L131PT1200 | Bedding works for HDPE Pipline 110 mm - (RD-L-13/1)-Z7-L131-PT | 2027-05-30 → 2027-05-10 (-20d) | 2027-05-31 → 2027-05-11 (-20d) | -108d → -95d |
| RHD4CZ7L131PT1300 | Installing for HDPE Pipline 110 mm - (RD-L-13/1)-Z7-L131-PT | 2027-06-05 → 2027-05-20 (-16d) | 2027-06-06 → 2027-05-22 (-15d) | -111d → -98d |
| RHD4CZ7L131PT1400 | Primary Test for HDPE Pipline 110 mm - (RD-L-13/1)-Z7-L131-PT | 2027-06-17 → 2027-06-02 (-15d) | 2027-06-19 → 2027-06-03 (-16d) | -109d → -96d |
| RHD4CZ7L131PT1500 | Backfilling and warning tape works for HDPE Pipline 110 mm - (RD-L-13/1)-Z7-L131-PT | 2027-06-22 → 2027-06-07 (-15d) | 2027-06-23 → 2027-06-08 (-15d) | -111d → -98d |
| 6849 | **RHD4-02-002-L131-(PT)-HDPE Pipes - 160 mm diameter** | 2027-05-23 → 2027-05-03 (-20d) | 2027-06-21 → 2027-06-06 (-15d) |  |
| RHD4CZ7L131PT1101 | Excavation works for HDPE Pipline 160 mm - (RD-L-13/1)-Z7-L131-PT | 2027-05-23 → 2027-05-03 (-20d) | 2027-05-25 → 2027-05-05 (-20d) | -111d → -98d |
| RHD4CZ7L131PT1201 | Bedding works for HDPE Pipline 160 mm - (RD-L-13/1)-Z7-L131-PT | 2027-05-26 → 2027-05-06 (-20d) | 2027-05-29 → 2027-05-09 (-20d) | -111d → -98d |
| RHD4CZ7L131PT1301 | Installing for HDPE Pipline 160 mm - (RD-L-13/1)-Z7-L131-PT | 2027-05-30 → 2027-05-10 (-20d) | 2027-06-03 → 2027-05-19 (-15d) | -111d → -98d |
| RHD4CZ7L131PT1401 | Primary Test for HDPE Pipline 160 mm - (RD-L-13/1)-Z7-L131-PT | 2027-06-15 → 2027-05-31 (-15d) | 2027-06-16 → 2027-06-01 (-15d) | -111d → -98d |
| RHD4CZ7L131PT1501 | Backfilling and warning tape works for HDPE Pipline 160 mm - (RD-L-13/1)-Z7-L131-PT | 2027-06-17 → 2027-06-02 (-15d) | 2027-06-21 → 2027-06-06 (-15d) | -111d → -98d |
| 6853 | **RHD4-02-002-L131-(PT)-Gate Valves (Direct Buried)** | 2027-06-05 → 2027-05-20 (-16d) | 2027-06-26 → 2027-06-10 (-16d) |  |
| RHD4CZ7L131PT3100 | Installation for Direct Buried Gate Valves - (RD-L-13/1)-Z7-L131-PT | 2027-06-05 → 2027-05-20 (-16d) | 2027-06-06 → 2027-05-22 (-15d) | -84d → -71d |
| RHD4CZ7L131PT3200 | Stem and Service box for Direct Buried Gate Valves - (RD-L-13/1)-Z7-L131-PT | 2027-06-24 → 2027-06-09 (-15d) | 2027-06-26 → 2027-06-10 (-16d) | -99d → -86d |
| 6858 | **RHD4-02-002-L131-(PT)-Air Valve Chambers** | 2027-05-29 → 2027-05-09 (-20d) | 2027-06-06 → 2027-05-22 (-15d) |  |
| RHD4CZ7L131PT2102 | Excavation and Bedding for Air Valve Chambers for Potable Water Network - (RD-L-13/1)-Z7-L131-PT | 2027-05-29 → 2027-05-09 (-20d) | 2027-05-30 → 2027-05-10 (-20d) | -110d → -97d |
| RHD4CZ7L131PT2202 | PC works for Air Valve Chambers for Potable Water Network - (RD-L-13/1)-Z7-L131-PT | 2027-05-31 → 2027-05-11 (-20d) | 2027-06-01 → 2027-05-12 (-20d) | -110d → -97d |

| ID | Task | Start | Finish | Total float |
| --- | --- | --- | --- | --- |
| RHD4CZ7L131PT2302 | Installation for Air Valve Chambers for Potable Water Network - (RD-L-13/1)-Z7-L131-PT | 2027-06-02 → 2027-05-13 (-20d) | 2027-06-03 → 2027-05-19 (-15d) | -110d → -97d |
| RHD4CZ7L131PT2402 | Backfilling works for Air Valve Chambers for Potable Water Network - (RD-L-13/1)-Z7-L131-PT | 2027-06-05 → 2027-05-20 (-16d) | 2027-06-06 → 2027-05-22 (-15d) | -110d → -97d |
| 6859 | **RHD4-02-002-L131-(PT)-Air Valves** | 2027-06-05 → 2027-05-20 (-16d) | 2027-06-08 → 2027-05-24 (-15d) |  |
| RHD4CZ7L131PT3103 | Installation for Air Valves for Potable Water Network - (RD-L-13/1)-Z7-L131-PT | 2027-06-05 → 2027-05-20 (-16d) | 2027-06-06 → 2027-05-22 (-15d) | -110d → -97d |
| RHD4CZ7L131PT3203 | Stem and Service box for Air Valves for Potable Water Network - (RD-L-13/1)-Z7-L131-PT | 2027-06-07 → 2027-05-23 (-15d) | 2027-06-08 → 2027-05-24 (-15d) | -110d → -97d |
| 6860 | **RHD4-02-002-L131-(PT)-Fire Hydrant** | 2027-06-24 → 2027-06-09 (-15d) | 2027-07-12 → 2027-06-27 (-15d) |  |
| RHD4CZ7L131PT4100 | Excavation and Bedding and Pipe Installation for Fire Hydrant - (RD-L-13/1)-Z7-L131-PT | 2027-06-24 → 2027-06-09 (-15d) | 2027-06-29 → 2027-06-14 (-15d) | -111d → -98d |
| RHD4CZ7L131PT4200 | Valve Installation for Fire Hydrant - (RD-L-13/1)-Z7-L131-PT | 2027-06-30 → 2027-06-15 (-15d) | 2027-07-03 → 2027-06-17 (-16d) | -111d → -98d |
| RHD4CZ7L131PT4300 | Stem for Fire Hydrant - (RD-L-13/1)-Z7-L131-PT | 2027-07-04 → 2027-06-19 (-15d) | 2027-07-06 → 2027-06-21 (-15d) | -111d → -98d |
| RHD4CZ7L131PT4400 | Fire Installation for Fire Hydrant - (RD-L-13/1)-Z7-L131-PT | 2027-07-07 → 2027-06-22 (-15d) | 2027-07-10 → 2027-06-24 (-16d) | -111d → -98d |
| RHD4CZ7L131PT4500 | Protection Barriers for Fire Hydrant - (RD-L-13/1)-Z7-L131-PT | 2027-07-11 → 2027-06-26 (-15d) | 2027-07-12 → 2027-06-27 (-15d) | -111d → -98d |
| 6861 | **RHD4-02-002-L131-(PT)-Concrete Encasement** | 2027-06-05 → 2027-05-20 (-16d) | 2027-06-14 → 2027-05-30 (-15d) |  |
| RHD4CZ7L131PT5100 | Pipe Encasement for Potable Pipelines - (RD-L-13/1)-Z7-L131-PT | 2027-06-05 → 2027-05-20 (-16d) | 2027-06-14 → 2027-05-30 (-15d) | -111d → -98d |
| 6862 | **RHD4-02-002-Z7-L131-Irrigation Network - IRR** | 2027-05-29 → 2027-05-09 (-20d) | 2027-07-17 → 2027-07-01 (-16d) |  |
| 6863 | **RHD4-02-002-L131-(IRR)-HDPE Pipes - 160 mm diameter** | 2027-05-29 → 2027-05-09 (-20d) | 2027-06-20 → 2027-06-05 (-15d) |  |
| RHD4CZ7L131IRR1100 | Excavation works for HDPE Pipline 160 mm - (RD-L-13/1)-Z7-L131-IRR | 2027-05-29 → 2027-05-09 (-20d) | 2027-06-02 → 2027-05-13 (-20d) | -110d → -97d |
| RHD4CZ7L131IRR1200 | Bedding works for HDPE Pipline 160 mm - (RD-L-13/1)-Z7-L131-IRR | 2027-06-03 → 2027-05-19 (-15d) | 2027-06-07 → 2027-05-23 (-15d) | -90d → -77d |
| RHD4CZ7L131IRR1300 | Installing for HDPE Pipline 160 mm - (RD-L-13/1)-Z7-L131-IRR | 2027-06-08 → 2027-05-24 (-15d) | 2027-06-13 → 2027-05-29 (-15d) | -90d → -77d |
| RHD4CZ7L131IRR1400 | Primary Test for HDPE Pipline 160 mm - (RD-L-13/1)-Z7-L131-IRR | 2027-06-14 → 2027-05-30 (-15d) | 2027-06-15 → 2027-05-31 (-15d) | -90d → -77d |
| RHD4CZ7L131IRR1500 | Backfilling and warning tape works for HDPE Pipline 160 mm - (RD-L-13/1)-Z7-L131-IRR | 2027-06-16 → 2027-06-01 (-15d) | 2027-06-20 → 2027-06-05 (-15d) | -90d → -77d |
| 6685 | **RHD4-02-002-L131-(IRR)-Wash out Chamber** | 2027-06-03 → 2027-05-19 (-15d) | 2027-06-12 → 2027-05-27 (-16d) |  |
| RHD4CZ7L131IRR2101 | Excavation and Bedding for Wash out Chamber for Irrigation Network - (RD-L-13/1)-Z7-L131-IRR | 2027-06-03 → 2027-05-19 (-15d) | 2027-06-05 → 2027-05-20 (-16d) | -109d → -96d |
| RHD4CZ7L131IRR2201 | PC works for Wash out Chamber for Irrigation Network - (RD-L-13/1)-Z7-L131-IRR | 2027-06-06 → 2027-05-22 (-15d) | 2027-06-07 → 2027-05-23 (-15d) | -109d → -96d |
| RHD4CZ7L131IRR2301 | Installation for Wash out Chamber for Irrigation Network - (RD-L-13/1)-Z7-L131-IRR | 2027-06-08 → 2027-05-24 (-15d) | 2027-06-09 → 2027-05-25 (-15d) | -109d → -96d |
| RHD4CZ7L131IRR2401 | Backfilling works for Wash out Chamber for Irrigation Network - (RD-L-13/1)-Z7-L131-IRR | 2027-06-10 → 2027-05-26 (-15d) | 2027-06-12 → 2027-05-27 (-16d) | -109d → -96d |
| 6871 | **RHD4-02-002-L131-(IRR)-Gate Valves (Direct Buried)** | 2027-07-13 → 2027-06-28 (-15d) | 2027-07-17 → 2027-07-01 (-16d) |  |
| RHD4CZ7L131IRR3100 | Installation for Direct Buried Gate Valves - (RD-L-13/1)-Z7-L131-IRR | 2027-07-13 → 2027-06-28 (-15d) | 2027-07-14 → 2027-06-29 (-15d) | -111d → -98d |
| RHD4CZ7L131IRR3200 | Stem and Service box for Direct Buried Gate Valves - (RD-L-13/1)-Z7-L131-IRR | 2027-07-15 → 2027-06-30 (-15d) | 2027-07-17 → 2027-07-01 (-16d) | -111d → -98d |
| 6876 | **RHD4-02-002-L131-(IRR)-Air Valve Chamber** | 2027-06-03 → 2027-05-19 (-15d) | 2027-06-12 → 2027-05-27 (-16d) |  |
| RHD4CZ7L131IRR2102 | Excavation and Bedding for Valve Chamber for Irrigation Network - (RD-L-13/1)-Z7-L131-IRR | 2027-06-03 → 2027-05-19 (-15d) | 2027-06-05 → 2027-05-20 (-16d) | -110d → -97d |
| RHD4CZ7L131IRR2202 | PC works for Valve Chamber for Irrigation Network - (RD-L-13/1)-Z7-L131-IRR | 2027-06-06 → 2027-05-22 (-15d) | 2027-06-07 → 2027-05-23 (-15d) | -110d → -97d |
| RHD4CZ7L131IRR2302 | Installation for Valve Chamber for Irrigation Network - (RD-L-13/1)-Z7-L131-IRR | 2027-06-08 → 2027-05-24 (-15d) | 2027-06-09 → 2027-05-25 (-15d) | -110d → -97d |
| RHD4CZ7L131IRR2402 | Backfilling works for Valve Chamber for Irrigation Network - (RD-L-13/1)-Z7-L131-IRR | 2027-06-10 → 2027-05-26 (-15d) | 2027-06-12 → 2027-05-27 (-16d) | -110d → -97d |
| 6877 | **RHD4-02-002-L131-(IRR)-Air Valves** | 2027-06-10 → 2027-05-26 (-15d) | 2027-06-14 → 2027-05-30 (-15d) |  |
| RHD4CZ7L131IRR3103 | Installation for Air Valves for Irrigation Network - (RD-L-13/1)-Z7-L131-IRR | 2027-06-10 → 2027-05-26 (-15d) | 2027-06-12 → 2027-05-27 (-16d) | -110d → -97d |
| RHD4CZ7L131IRR3203 | Stem and Service box for Air Valves for Irrigation Network - (RD-L-13/1)-Z7-L131-IRR | 2027-06-13 → 2027-05-29 (-15d) | 2027-06-14 → 2027-05-30 (-15d) | -110d → -97d |
| 6686 | **RHD4-02-002-L131-(IRR)-Wash out Valves** | 2027-06-10 → 2027-05-26 (-15d) | 2027-06-14 → 2027-05-30 (-15d) |  |
| RHD4CZ7L131IRR3102 | Installation for Wash out Valve for Irrigation Network - (RD-L-13/1)-Z7-L131-IRR | 2027-06-10 → 2027-05-26 (-15d) | 2027-06-12 → 2027-05-27 (-16d) | -109d → -96d |
| RHD4CZ7L131IRR3202 | Stem and Service box for Wash out Valve for Irrigation Network - (RD-L-13/1)-Z7-L131-IRR | 2027-06-13 → 2027-05-29 (-15d) | 2027-06-14 → 2027-05-30 (-15d) | -109d → -96d |
| 6896 | **RHD4-02-002-Z7-L131-Medium Voltage Network - MV** | 2027-04-13 → 2027-03-29 (-15d) | 2027-09-01 → 2027-08-29 (-3d) |  |
| 6897 | **RHD4-02-002-L131-(MV)-Medium Voltage cable trench** | 2027-04-13 → 2027-03-29 (-15d) | 2027-09-01 → 2027-08-29 (-3d) |  |
| RHD4CZ7L131MV1100 | Excavation for Medium Voltage Trench - (RD-L-13/1)-Z7-L131-MV | 2027-04-13 → 2027-03-29 (-15d) | 2027-04-18 → 2027-04-03 (-15d) | -90d → -77d |
| RHD4CZ7L131MV1200 | Trench Backfilling for Medium Voltage Network - (RD-L-13/1)-Z7-L131-MV | 2027-08-26 → 2027-08-24 (-2d) | 2027-09-01 → 2027-08-29 (-3d) | -150.02d → -148d |
| 6899 | **RHD4-02-002-L131-(MV)-Medium Voltage cables 3Cx 500 mm²** | 2027-04-19 → 2027-04-04 (-15d) | 2027-04-29 → 2027-04-14 (-15d) |  |
| RHD4CZ7L131MV3100 | Installation of Medium Voltage Cables 3Cx 500 mm² - (RD-L-13/1)-Z7-L131-MV | 2027-04-19 → 2027-04-04 (-15d) | 2027-04-21 → 2027-04-06 (-15d) | -90d → -77d |
| RHD4CZ7L131MV3200 | Joints Installation of Medium Voltage Cables 3Cx 500 mm² - (RD-L-13/1)-Z7-L131-MV | 2027-04-22 → 2027-04-07 (-15d) | 2027-04-24 → 2027-04-08 (-16d) | -90d → -77d |
| RHD4CZ7L131MV3300 | Testing of Medium Voltage Cables 3Cx 500 mm² - (RD-L-13/1)-Z7-L131-MV | 2027-04-25 → 2027-04-10 (-15d) | 2027-04-27 → 2027-04-12 (-15d) | -90d → -77d |
| RHD4CZ7L131MV3400 | Termination of Medium Voltage Cables 3Cx 500 mm² - (RD-L-13/1)-Z7-L131-MV | 2027-04-28 → 2027-04-13 (-15d) | 2027-04-29 → 2027-04-14 (-15d) | -90d → -77d |
| 6900 | **RHD4-02-002-L131-(MV)-Medium Voltage cables 3Cx 50 mm²** | 2027-04-28 → 2027-04-13 (-15d) | 2027-04-29 → 2027-04-14 (-15d) |  |
| RHD4CZ7L131MV3401 | Termination of Medium Voltage Cables 3Cx 50 mm² - (RD-L-13/1)-Z7-L131-MV | 2027-04-28 → 2027-04-13 (-15d) | 2027-04-29 → 2027-04-14 (-15d) | -90d → -77d |
| 6903 | **RHD4-02-002-Z7-L131-Low Voltage Network - LV** | 2027-09-01 → 2027-08-30 (-2d) | 2027-09-22 → 2027-09-19 (-3d) |  |
| 6904 | **RHD4-02-002-L131-(LV)-Low Voltage duct banks** | 2027-09-01 → 2027-08-30 (-2d) | 2027-09-11 → 2027-09-07 (-4d) |  |
| RHD4CZ7L131LV2100 | Excavation of Duct Banks for Low Voltage Network - (RD-L-13/1)-Z7-L131-LV | 2027-09-01 → 2027-08-30 (-2d) | 2027-09-04 → 2027-08-31 (-4d) | -150.02d → -148d |
| RHD4CZ7L131LV2200 | Installation of Duct Banks for Low Voltage Network - (RD-L-13/1)-Z7-L131-LV | 2027-09-04 → 2027-09-01 (-3d) | 2027-09-06 → 2027-09-02 (-4d) | -150.02d → -148d |
| RHD4CZ7L131LV2300 | Pouring of Duct Banks for Low Voltage Network - (RD-L-13/1)-Z7-L131-LV | 2027-09-06 → 2027-09-04 (-2d) | 2027-09-08 → 2027-09-05 (-3d) | -150.02d → -148d |
| RHD4CZ7L131LV2400 | Backfilling of Duct Banks for Low Voltage Network - (RD-L-13/1)-Z7-L131-LV | 2027-09-08 → 2027-09-06 (-2d) | 2027-09-11 → 2027-09-07 (-4d) | -148.02d → -146d |
| 6905 | **RHD4-02-002-L131-(LV)-Low Voltage Drawpit** | 2027-09-08 → 2027-09-06 (-2d) | 2027-09-13 → 2027-09-09 (-4d) |  |
| RHD4CZ7L131LV5100 | Excavation of Drawpit size 900x900x1000mm for Low Voltage Network - (RD-L-13/1)-Z7-L131-LV | 2027-09-08 → 2027-09-06 (-2d) | 2027-09-11 → 2027-09-07 (-4d) | -150.02d → -148d |
| RHD4CZ7L131LV5200 | Installation of Drawpit size 900x900x1000mm for Low Voltage Network - (RD-L-13/1)-Z7-L131-LV | 2027-09-11 → 2027-09-08 (-3d) | 2027-09-13 → 2027-09-09 (-4d) | -150.02d → -148d |
| 6906 | **RHD4-02-002-L131-(LV)-Low Voltage cables** | 2027-09-13 → 2027-09-11 (-2d) | 2027-09-22 → 2027-09-19 (-3d) |  |
| RHD4CZ7L131LV3100 | Excavation for Low Voltage Cables for Low Voltage Network - (RD-L-13/1)-Z7-L131-LV | 2027-09-13 → 2027-09-11 (-2d) | 2027-09-15 → 2027-09-12 (-3d) | -150.02d → -148d |
| RHD4CZ7L131LV3200 | Cable Laying of Low Voltage Cables for Low Voltage Network - (RD-L-13/1)-Z7-L131-LV | 2027-09-15 → 2027-09-13 (-2d) | 2027-09-18 → 2027-09-14 (-4d) | -150.02d → -148d |
| RHD4CZ7L131LV3300 | Warning tape and Backfill for Low Voltage Cables for Low Voltage Network - (RD-L-13/1)-Z7-L131-LV | 2027-09-18 → 2027-09-15 (-3d) | 2027-09-20 → 2027-09-16 (-4d) | -150.02d → -148d |
| RHD4CZ7L131LV3400 | Testing of Low Voltage Cables for Low Voltage Network - (RD-L-13/1)-Z7-L131-LV | 2027-09-20 → 2027-09-18 (-2d) | 2027-09-22 → 2027-09-19 (-3d) | -150.02d → -148d |
| 6909 | **RHD4-02-002-Z7-L131-Street Lighting Network - SL** | 2027-09-04 → 2027-09-01 (-3d) | 2027-11-09 → 2027-11-06 (-3d) |  |
| 6910 | **RHD4-02-002-L131-(SL)-Street Lighting duct banks** | 2027-09-04 → 2027-09-01 (-3d) | 2027-09-13 → 2027-09-09 (-4d) |  |
| RHD4CZ7L131SL2100 | Excavation of Duct Banks for Street Lighting Network - (RD-L-13/1)-Z7-L131-SL | 2027-09-04 → 2027-09-01 (-3d) | 2027-09-06 → 2027-09-02 (-4d) | -140.02d → -138d |
| RHD4CZ7L131SL2200 | Installation of Duct Banks for Street Lighting Network - (RD-L-13/1)-Z7-L131-SL | 2027-09-06 → 2027-09-04 (-2d) | 2027-09-08 → 2027-09-05 (-3d) | -140.02d → -138d |
| RHD4CZ7L131SL2300 | Pouring of Duct Banks for Street Lighting Network - (RD-L-13/1)-Z7-L131-SL | 2027-09-08 → 2027-09-06 (-2d) | 2027-09-11 → 2027-09-07 (-4d) | -140.02d → -138d |
| RHD4CZ7L131SL2400 | Backfilling of Duct Banks for Street Lighting Network - (RD-L-13/1)-Z7-L131-SL | 2027-09-11 → 2027-09-08 (-3d) | 2027-09-13 → 2027-09-09 (-4d) | -119.02d → -117d |

| ID | Task | Start | Finish | Complete | Total float |
| --- | --- | --- | --- | --- | --- |
| 6911 | **RHD4-02-002-L131-(SL)-Street Lighting Drawpit** | 2027-09-22 → 2027-09-20 (-2d) | 2027-09-28 → 2027-09-25 (-3d) |  |  |
| RHD4CZ7L131SL5100 | Excavation of Drawpit size 600x600x900mm for Street Lighting Network - (RD-L-13/1)-Z7-L131-SL | 2027-09-22 → 2027-09-20 (-2d) | 2027-09-26 → 2027-09-21 (-5d) |  | -150.02d → -148d |
| RHD4CZ7L131SL5200 | Installation of Drawpit size 600x600x900mm for Street Lighting Network - (RD-L-13/1)-Z7-L131-SL | 2027-09-26 → 2027-09-22 (-4d) | 2027-09-28 → 2027-09-25 (-3d) |  | -150.02d → -148d |
| 6912 | **RHD4-02-002-L131-(SL)-Street Lighting cables** | 2027-09-28 → 2027-09-26 (-2d) | 2027-10-20 → 2027-10-17 (-3d) |  |  |
| RHD4CZ7L131SL3100 | Excavation for Street Lighting Cables for Street Lighting Network - (RD-L-13/1)-Z7-L131-SL | 2027-09-28 → 2027-09-26 (-2d) | 2027-10-05 → 2027-10-02 (-3d) |  | -150.02d → -148d |
| RHD4CZ7L131SL3200 | Cable Laying of Street Lighting Cables for Street Lighting Network - (RD-L-13/1)-Z7-L131-SL | 2027-10-05 → 2027-10-03 (-2d) | 2027-10-11 → 2027-10-07 (-4d) |  | -150.02d → -148d |
| RHD4CZ7L131SL3300 | Warning tape and Backfill for Street Lighting Cables for Street Lighting Network - (RD-L-13/1)-Z7-L131-SL | 2027-10-11 → 2027-10-09 (-2d) | 2027-10-17 → 2027-10-13 (-4d) |  | -150.02d → -148d |
| RHD4CZ7L131SL3400 | Testing of Street Lighting Cables for Street Lighting Network - (RD-L-13/1)-Z7-L131-SL | 2027-10-17 → 2027-10-14 (-3d) | 2027-10-20 → 2027-10-17 (-3d) |  | -150.02d → -148d |
| 6913 | **RHD4-02-002-L131-(SL)-Street Lighting Poles** | 2027-10-20 → 2027-10-18 (-2d) | 2027-11-09 → 2027-11-06 (-3d) |  |  |
| RHD4CZ7L131SL1100 | Excavation for RC Base for Lighting Poles for Street Lighting Network - (RD-L-13/1)-Z7-L131-SL | 2027-10-20 → 2027-10-18 (-2d) | 2027-10-24 → 2027-10-20 (-4d) |  | -150.02d → -148d |
| RHD4CZ7L131SL1200 | Installation for RC Base for Lighting Poles for Street Lighting Network - (RD-L-13/1)-Z7-L131-SL | 2027-10-24 → 2027-10-21 (-3d) | 2027-10-27 → 2027-10-24 (-3d) |  | -150.02d → -148d |
| RHD4CZ7L131SL1300 | Backfill for RC Base for Lighting Poles for Street Lighting Network - (RD-L-13/1)-Z7-L131-SL | 2027-10-27 → 2027-10-25 (-2d) | 2027-10-31 → 2027-10-27 (-4d) |  | -150.02d → -148d |
| RHD4CZ7L131SL1400 | Installation for Lighting Poles for Street Lighting Network - (RD-L-13/1)-Z7-L131-SL | 2027-10-31 → 2027-10-28 (-3d) | 2027-11-06 → 2027-11-02 (-4d) |  | -150.02d → -148d |
| RHD4CZ7L131SL1500 | Luminaire Installation for Lighting Poles for Street Lighting Network - (RD-L-13/1)-Z7-L131-SL | 2027-11-06 → 2027-11-03 (-3d) | 2027-11-09 → 2027-11-06 (-3d) |  | -150.02d → -148d |
| 6921 | **RHD4-02-002-Z7-L131-Telecommunications Network - TC** | 2027-09-06 → 2027-09-04 (-2d) | 2027-12-04 → 2027-11-30 (-4d) |  |  |
| 6922 | **RHD4-02-002-L131-(TC)-Telecommunications Ducts** | 2027-11-09 → 2027-11-07 (-2d) | 2027-12-04 → 2027-11-30 (-4d) |  |  |
| RHD4CZ7L131TC2100 | Excavation of HDPE Ducts for Telecom Network - (RD-L-13/1)-Z7-L131-TC | 2027-11-09 → 2027-11-07 (-2d) | 2027-11-18 → 2027-11-15 (-3d) |  | -150.02d → -148d |
| RHD4CZ7L131TC2200 | Installation of HDPE Ducts for Telecom Network - (RD-L-13/1)-Z7-L131-TC | 2027-11-18 → 2027-11-16 (-2d) | 2027-11-24 → 2027-11-21 (-3d) |  | -147.02d → -145d |
| RHD4CZ7L131TC2400 | Backfilling of HDPE Ducts for Telecom Network - (RD-L-13/1)-Z7-L131-TC | 2027-11-24 → 2027-11-22 (-2d) | 2027-12-04 → 2027-11-30 (-4d) |  | -133.02d → -131d |
| 6923 | **RHD4-02-002-L131-(TC)-Telecommunications Manholes** | 2027-11-18 → 2027-11-16 (-2d) | 2027-11-25 → 2027-11-22 (-3d) |  |  |
| RHD4CZ7L131TC5100 | Excavation for Manholes for Telecom Network - (RD-L-13/1)-Z7-L131-TC | 2027-11-18 → 2027-11-16 (-2d) | 2027-11-22 → 2027-11-18 (-4d) |  | -150.02d → -148d |
| RHD4CZ7L131TC5200 | Installation of Manholes for Telecom Network - (RD-L-13/1)-Z7-L131-TC | 2027-11-22 → 2027-11-20 (-2d) | 2027-11-25 → 2027-11-22 (-3d) |  | -150.02d → -148d |
| 6924 | **RHD4-02-002-L131-(TC)-Telecomminications Road Crossings** | 2027-09-06 → 2027-09-04 (-2d) | 2027-09-28 → 2027-09-25 (-3d) |  |  |
| RHD4CZ7L131TC3100 | Excavation for Road Crossings for Telecom Network - (RD-L-13/1)-Z7-L131-TC | 2027-09-06 → 2027-09-04 (-2d) | 2027-09-11 → 2027-09-07 (-4d) |  | -107.02d → -105d |
| RHD4CZ7L131TC3200 | Installation of Road Crossings for Telecom Network - (RD-L-13/1)-Z7-L131-TC | 2027-09-11 → 2027-09-08 (-3d) | 2027-09-16 → 2027-09-13 (-3d) |  | -107.02d → -105d |
| RHD4CZ7L131TC3300 | Pouring of Road Crossings for Telecom Network - (RD-L-13/1)-Z7-L131-TC | 2027-09-16 → 2027-09-14 (-2d) | 2027-09-22 → 2027-09-19 (-3d) |  | -106.02d → -104d |
| RHD4CZ7L131TC3400 | Backfilling of Road Crossings for Telecom Network - (RD-L-13/1)-Z7-L131-TC | 2027-09-22 → 2027-09-20 (-2d) | 2027-09-28 → 2027-09-25 (-3d) |  | -104.02d → -102d |
| 6925 | **RHD4-02-002-Z7-L131-Information and Communication Technologies - ICT** | 2027-09-11 → 2027-09-08 (-3d) | 2027-12-23 → 2027-12-20 (-3d) |  |  |
| 6926 | **RHD4-02-002-L131-(ICT)-Information and Communication Technologies Ducts** | 2027-11-25 → 2027-11-23 (-2d) | 2027-12-23 → 2027-12-20 (-3d) |  |  |
| RHD4CZ7L131ICT2100 | Excavation of HDPE Ducts for ICT Network - (RD-L-13/1)-Z7-L131-ICT | 2027-11-25 → 2027-11-23 (-2d) | 2027-12-05 → 2027-12-01 (-4d) |  | -150.02d → -148d |
| RHD4CZ7L131ICT2200 | Installation of HDPE Ducts for ICT Network - (RD-L-13/1)-Z7-L131-ICT | 2027-12-05 → 2027-12-02 (-3d) | 2027-12-11 → 2027-12-07 (-4d) |  | -147.02d → -145d |
| RHD4CZ7L131ICT2400 | Backfilling of HDPE Ducts for ICT Network - (RD-L-13/1)-Z7-L131-ICT | 2027-12-14 → 2027-12-12 (-2d) | 2027-12-23 → 2027-12-20 (-3d) |  | -150.02d → -148d |
| 6927 | **RHD4-02-002-L131-(ICT)-Information and Communication Technologies Manholes** | 2027-12-05 → 2027-12-02 (-3d) | 2027-12-14 → 2027-12-11 (-3d) |  |  |
| RHD4CZ7L131ICT5100 | Excavation for Manholes for ICT Network - (RD-L-13/1)-Z7-L131-ICT | 2027-12-05 → 2027-12-02 (-3d) | 2027-12-09 → 2027-12-06 (-3d) |  | -150.02d → -148d |
| RHD4CZ7L131ICT5200 | Installation of Manholes for ICT Network - (RD-L-13/1)-Z7-L131-ICT | 2027-12-09 → 2027-12-07 (-2d) | 2027-12-14 → 2027-12-11 (-3d) |  | -150.02d → -148d |
| 6928 | **RHD4-02-002-L131-(ICT)-Information and Communication Technologies Road Crossings** | 2027-09-11 → 2027-09-08 (-3d) | 2027-10-06 → 2027-10-03 (-3d) |  |  |
| RHD4CZ7L131ICT3100 | Excavation for Road Crossings for ICT Network - (RD-L-13/1)-Z7-L131-ICT | 2027-09-11 → 2027-09-08 (-3d) | 2027-09-15 → 2027-09-12 (-3d) |  | -106.02d → -104d |
| RHD4CZ7L131ICT3200 | Installation of Road Crossings for ICT Network - (RD-L-13/1)-Z7-L131-ICT | 2027-09-16 → 2027-09-14 (-2d) | 2027-09-25 → 2027-09-20 (-5d) |  | -107.02d → -105d |
| RHD4CZ7L131ICT3300 | Pouring of Road Crossings for ICT Network - (RD-L-13/1)-Z7-L131-ICT | 2027-09-25 → 2027-09-21 (-4d) | 2027-10-02 → 2027-09-28 (-4d) |  | -107.02d → -105d |
| RHD4CZ7L131ICT3400 | Backfilling of Road Crossings for ICT Network - (RD-L-13/1)-Z7-L131-ICT | 2027-10-02 → 2027-09-29 (-3d) | 2027-10-06 → 2027-10-03 (-3d) |  | -107.02d → -105d |
| 6929 | **RHD4-02-002-Z7-L131-Security Network - CCTV** | 2027-12-23 → 2027-12-21 (-2d) | 2028-01-22 → 2028-01-18 (-4d) |  |  |
| 6930 | **RHD4-02-002-L131-(CCTV)-Civil Works** | 2027-12-23 → 2027-12-21 (-2d) | 2027-12-29 → 2027-12-26 (-3d) |  |  |
| RHD4CZ7L131CCTV2100 | Civil Works for Security Network - (RD-L-13/1)-Z7-L131-CCTV | 2027-12-23 → 2027-12-21 (-2d) | 2027-12-29 → 2027-12-26 (-3d) |  | -150.02d → -148d |
| 4851 | **RHD4-02-002-L131-(CCTV)-CCTV Poles** | 2027-12-29 → 2027-12-27 (-2d) | 2028-01-10 → 2028-01-06 (-4d) |  |  |
| RHD4CZ7L131CCTV1100 | Excavation for RC Base for CCTV Poles for Security Network - (RD-L-13/1)-Z7-L131-CCTV | 2027-12-29 → 2027-12-27 (-2d) | 2028-01-01 → 2027-12-28 (-4d) |  | -148.02d → -146d |
| RHD4CZ7L131CCTV1200 | Installation for RC Base for CCTV Poles for Security Network - (RD-L-13/1)-Z7-L131-CCTV | 2028-01-01 → 2027-12-29 (-3d) | 2028-01-03 → 2027-12-30 (-4d) |  | -148.02d → -146d |
| RHD4CZ7L131CCTV1300 | Backfill for RC Base for CCTV Poles for Security Network - (RD-L-13/1)-Z7-L131-CCTV | 2028-01-03 → 2028-01-01 (-2d) | 2028-01-05 → 2028-01-02 (-3d) |  | -148.02d → -146d |
| RHD4CZ7L131CCTV1400 | Installation for CCTV Poles for Security Network - (RD-L-13/1)-Z7-L131-CCTV | 2028-01-05 → 2028-01-03 (-2d) | 2028-01-08 → 2028-01-04 (-4d) |  | -148.02d → -146d |
| RHD4CZ7L131CCTV1500 | Protection post Installation for CCTV Poles for Security Network - (RD-L-13/1)-Z7-L131-CCTV | 2028-01-08 → 2028-01-05 (-3d) | 2028-01-10 → 2028-01-06 (-4d) |  | -145.02d → -143d |
| 4852 | **RHD4-02-002-L131-(CCTV)-Camera** | 2028-01-10 → 2028-01-08 (-2d) | 2028-01-12 → 2028-01-09 (-3d) |  |  |
| RHD4CZ7L131CCTV3100 | Installation for Cameras for Security Network - (RD-L-13/1)-Z7-L131-CCTV | 2028-01-10 → 2028-01-08 (-2d) | 2028-01-12 → 2028-01-09 (-3d) |  | -147.02d → -145d |
| 4853 | **RHD4-02-002-L131-(CCTV)-Power and Infrastructure** | 2028-01-08 → 2028-01-05 (-3d) | 2028-01-12 → 2028-01-09 (-3d) |  |  |
| RHD4CZ7L131CCTV4100 | Installation of Power outlet, UPS and midspan for PTZ Camerafor Cameras for Security Network - (RD-L-13/1)-Z7-L131-CCTV | 2028-01-08 → 2028-01-05 (-3d) | 2028-01-10 → 2028-01-06 (-4d) |  | -148.02d → -146d |
| RHD4CZ7L131CTV4200 | Short Range Wireless PoP wireless Bridgefor CCTV Poles for Security Network - (RD-C-2)-Z7-C02-CCTV | 2028-01-10 → 2028-01-08 (-2d) | 2028-01-12 → 2028-01-09 (-3d) |  | -148.02d → -146d |
| 4855 | **RHD4-02-002-L131-(CCTV)-CCTV Panels and Components** | 2028-01-12 → 2028-01-10 (-2d) | 2028-01-22 → 2028-01-18 (-4d) |  |  |
| RHD4CZ7L131CCTV6100 | Installation for CCTV Panels for Security Network - (RD-L-13/1)-Z7-L131-CCTV | 2028-01-12 → 2028-01-10 (-2d) | 2028-01-22 → 2028-01-18 (-4d) |  | -147.02d → -145d |
| 7135 | **RHD4-02-002-Z7-C013** | 2027-02-11 → 2026-10-15 (-119d) | 2028-01-29 → 2028-01-25 (-4d) |  |  |
| 7314 | **RHD4-02-002-Z7-C013-Road Works - RD** | 2027-03-06 → 2026-10-15 (-142d) | 2028-01-29 → 2028-01-25 (-4d) |  |  |
| 7315 | **RHD4-02-002-C013-(RD)-Subgrade** | 2027-03-06 → 2027-03-07 (+1d) | 2027-03-22 → 2027-03-23 (+1d) |  |  |
| RHD4CZ7C013RD1100 | Supply, lay and compaction subgrade compacted thickness 300 mm for Roads - (RD-C-1/3)-Z7-C013-RD | 2027-03-06 → 2027-03-07 (+1d) | 2027-03-22 → 2027-03-23 (+1d) |  | -185d → -186d |
| 7316 | **RHD4-02-002-C013-(RD)-Aggregate Base Course** | 2027-03-23 → 2026-10-15 (-159d) | 2027-04-01 → 2027-04-03 (+2d) |  |  |
| RHD4CZ7C013RD2100 | Supply, lay and compaction Aggregate base course compacted thickness 300 mmfor Roads - (RD-C-1/3)-Z7-C013-RD | 2027-03-23 → 2026-10-15 A (-159d) | 2027-04-01 → 2027-04-03 (+2d) | 0% → 32% | -185d → -186d |
| 7317 | **RHD4-02-002-C013-(RD)-Bituminous base course Two Layers, including (MC1)&(RC2)** | 2027-04-03 → 2027-04-04 (+1d) | 2027-11-28 → 2027-11-15 (-13d) |  |  |
| RHD4CZ7C013RD3100 | Supply, lay and Asphaltic base course including Prime Coat (MC1) for 1st Layer - (RD-C-1/3)-Z7-C013-RD | 2027-04-03 → 2027-04-04 (+1d) | 2027-04-06 → 2027-04-07 (+1d) |  | -185d → -186d |
| RHD4CZ7C013RD3200 | Supply, lay and Asphaltic base course including Tack Coat (RC2) for 2nd Layer - (RD-C-1/3)-Z7-C013-RD | 2027-11-24 → 2027-11-11 (-13d) | 2027-11-28 → 2027-11-15 (-13d) |  | -141d → -130d |
| 7319 | **RHD4-02-002-C013-(RD)-Precast Concrete Curb** | 2027-11-29 → 2027-11-16 (-13d) | 2027-12-04 → 2027-11-21 (-13d) |  |  |
| RHD4CZ7C013RD5100 | Supply and installation Precast Concrete Kerb for Roads - (RD-C-1/3)-Z7-C013-RD | 2027-11-29 → 2027-11-16 (-13d) | 2027-12-04 → 2027-11-21 (-13d) |  | -141d → -130d |
| 7322 | **RHD4-02-002-C013-(RD)-Traffic Signage** | 2028-01-22 → 2028-01-19 (-3d) | 2028-01-29 → 2028-01-25 (-4d) |  |  |
| RHD4CZ7C013RD8100 | Installation of Traffic Signage for Road Network - (RD-C-1/3)-Z7-C013-RD | 2028-01-22 → 2028-01-19 (-3d) | 2028-01-29 → 2028-01-25 (-4d) |  | -147.02d → -145d |
| 7318 | **RHD4-02-002-C013-(RD)-Bituminous concrete wearing course including tack coat (RC2)** | 2027-12-05 → 2027-11-22 (-13d) | 2027-12-06 → 2027-11-23 (-13d) |  |  |

| ID | Task | Start | Finish | Total float |
| --- | --- | --- | --- | --- |
| RHD4CZ7C013RD4100 | Supply, lay and compaction Asphaltic wearing course including tack Coat (RC2)for Road Network - (RD-C-1/3)-Z7-C013-RD | 2027-12-05 → 2027-11-22 (-13d) | 2027-12-06 → 2027-11-23 (-13d) | -141d → -130d |
| 7321 | **RHD4-02-002-C013-(RD)-Pavement Marking** | 2027-12-07 → 2027-11-24 (-13d) | 2027-12-13 → 2027-11-30 (-13d) |  |
| RHD4CZ7C013RD7100 | Pavement Markings for Road Network - (RD-C-1/3)-Z7-C013-RD | 2027-12-07 → 2027-11-24 (-13d) | 2027-12-13 → 2027-11-30 (-13d) | -141d → -130d |
| 7240 | **RHD4-02-002-Z7-C013-Irrigation Network - IRR** | 2027-02-11 → 2027-02-08 (-3d) | 2027-04-11 → 2027-04-12 (+1d) |  |
| 1770 | **RHD4-02-002-C013-(IRR)-Air Valves** | 2027-03-23 → 2027-03-20 (-3d) | 2027-03-28 → 2027-03-23 (-5d) |  |
| RHD4CZ7C013IRR3103 | Installation for Air Valves for Irrigation Network - (RD-C-1/3)-Z7-C013-IRR | 2027-03-23 → 2027-03-20 (-3d) | 2027-03-25 → 2027-03-21 (-4d) | -173.02d → -170d |
| RHD4CZ7C013IRR3203 | Stem and Service box for Air Valves for Irrigation Network - (RD-C-1/3)-Z7-C013-IRR | 2027-03-25 → 2027-03-22 (-3d) | 2027-03-28 → 2027-03-23 (-5d) | -173.02d → -170d |
| 7245 | **RHD4-02-002-C013-(IRR)-HDPE Pipes - 315 mm diameter** | 2027-02-11 → 2027-02-08 (-3d) | 2027-02-24 → 2027-02-18 (-6d) |  |
| RHD4CZ7C013IRR1104 | Excavation works for HDPE Pipline 315 mm - (RD-C-1/3)-Z7-C013-IRR | 2027-02-11 → 2027-02-08 (-3d) | 2027-02-14 → 2027-02-09 (-5d) | -174.02d → -171d |
| RHD4CZ7C013IRR1204 | Bedding works for HDPE Pipline 315 mm - (RD-C-1/3)-Z7-C013-IRR | 2027-02-14 → 2027-02-10 (-4d) | 2027-02-16 → 2027-02-11 (-5d) | -161.02d → -158d |
| RHD4CZ7C013IRR1304 | Installing for HDPE Pipline 315 mm - (RD-C-1/3)-Z7-C013-IRR | 2027-02-16 → 2027-02-13 (-3d) | 2027-02-18 → 2027-02-14 (-4d) | -161.02d → -158d |
| RHD4CZ7C013IRR1404 | Primary Test for HDPE Pipline 315 mm - (RD-C-1/3)-Z7-C013-IRR | 2027-02-18 → 2027-02-15 (-3d) | 2027-02-21 → 2027-02-16 (-5d) | -161.02d → -158d |
| RHD4CZ7C013IRR1504 | Backfilling and warning tape works for HDPE Pipline 315 mm - (RD-C-1/3)-Z7-C013-IRR | 2027-02-21 → 2027-02-17 (-4d) | 2027-02-24 → 2027-02-18 (-6d) | -161.02d → -158d |
| 6107 | **RHD4-02-002-C013-(IRR)-HDPE Pipes - 160 mm diameter** | 2027-02-14 → 2027-02-10 (-4d) | 2027-02-27 → 2027-02-21 (-6d) |  |
| RHD4CZ7C013IRR1100 | Excavation works for HDPE Pipline 160 mm - (RD-C-1/3)-Z7-C013-IRR | 2027-02-14 → 2027-02-10 (-4d) | 2027-02-16 → 2027-02-11 (-5d) | -174.02d → -171d |
| RHD4CZ7C013IRR1200 | Bedding works for HDPE Pipline 160 mm - (RD-C-1/3)-Z7-C013-IRR | 2027-02-16 → 2027-02-13 (-3d) | 2027-02-18 → 2027-02-14 (-4d) | -152.02d → -149d |
| RHD4CZ7C013IRR1300 | Installing for HDPE Pipline 160 mm - (RD-C-1/3)-Z7-C013-IRR | 2027-02-18 → 2027-02-15 (-3d) | 2027-02-21 → 2027-02-16 (-5d) | -152.02d → -149d |
| RHD4CZ7C013IRR1400 | Primary Test for HDPE Pipline 160 mm - (RD-C-1/3)-Z7-C013-IRR | 2027-02-21 → 2027-02-17 (-4d) | 2027-02-24 → 2027-02-18 (-6d) | -152.02d → -149d |
| RHD4CZ7C013IRR1500 | Backfilling and warning tape works for HDPE Pipline 160 mm - (RD-C-1/3)-Z7-C013-IRR | 2027-02-24 → 2027-02-20 (-4d) | 2027-02-27 → 2027-02-21 (-6d) | -152.02d → -149d |
| 6115 | **RHD4-02-002-C013-(IRR)-Gate Valves (Direct Buried)** | 2027-04-07 → 2027-04-08 (+1d) | 2027-04-11 → 2027-04-12 (+1d) |  |
| RHD4CZ7C013IRR3100 | Installation for Direct Buried Gate Valves - (RD-C-1/3)-Z7-C013-IRR | 2027-04-07 → 2027-04-08 (+1d) | 2027-04-08 → 2027-04-10 (+2d) | -185d → -186d |
| RHD4CZ7C013IRR3200 | Stem and Service box for Direct Buried Gate Valves - (RD-C-1/3)-Z7-C013-IRR | 2027-04-10 → 2027-04-11 (+1d) | 2027-04-11 → 2027-04-12 (+1d) | -185d → -186d |
| 1769 | **RHD4-02-002-C013-(IRR)-Air Valve Chamber** | 2027-03-16 → 2027-03-13 (-3d) | 2027-03-25 → 2027-03-21 (-4d) |  |
| RHD4CZ7C013IRR2102 | Excavation and Bedding for Valve Chamber for Irrigation Network - (RD-C-1/3)-Z7-C013-IRR | 2027-03-16 → 2027-03-13 (-3d) | 2027-03-18 → 2027-03-14 (-4d) | -174.02d → -171d |
| RHD4CZ7C013IRR2202 | PC works for Valve Chamber for Irrigation Network - (RD-C-1/3)-Z7-C013-IRR | 2027-03-18 → 2027-03-15 (-3d) | 2027-03-21 → 2027-03-16 (-5d) | -174.02d → -171d |
| RHD4CZ7C013IRR2302 | Installation for Valve Chamber for Irrigation Network - (RD-C-1/3)-Z7-C013-IRR | 2027-03-21 → 2027-03-17 (-4d) | 2027-03-23 → 2027-03-18 (-5d) | -174.02d → -171d |
| RHD4CZ7C013IRR2402 | Backfilling works for Valve Chamber for Irrigation Network - (RD-C-1/3)-Z7-C013-IRR | 2027-03-23 → 2027-03-20 (-3d) | 2027-03-25 → 2027-03-21 (-4d) | -174.02d → -171d |
| 8188 | **RHD4-02-002-C013-(IRR)-HDPE Pipes - 180 mm diameter** | 2027-02-16 → 2027-02-13 (-3d) | 2027-03-16 → 2027-03-08 (-8d) |  |
| RHD4CZ7C013IRR1101 | Excavation works for HDPE Pipline 180 mm - (RD-C-1/3)-Z7-C013-IRR | 2027-02-16 → 2027-02-13 (-3d) | 2027-02-23 → 2027-02-17 (-6d) | -174.02d → -171d |
| RHD4CZ7C013IRR1201 | Bedding works for HDPE Pipline 180 mm - (RD-C-1/3)-Z7-C013-IRR | 2027-02-23 → 2027-02-18 (-5d) | 2027-02-28 → 2027-02-23 (-5d) | -174.02d → -171d |
| RHD4CZ7C013IRR1301 | Installing for HDPE Pipline 180 mm - (RD-C-1/3)-Z7-C013-IRR | 2027-02-28 → 2027-02-24 (-4d) | 2027-03-06 → 2027-03-01 (-5d) | -174.02d → -171d |
| RHD4CZ7C013IRR1401 | Primary Test for HDPE Pipline 180 mm - (RD-C-1/3)-Z7-C013-IRR | 2027-03-06 → 2027-03-02 (-4d) | 2027-03-08 → 2027-03-03 (-5d) | -174.02d → -171d |
| RHD4CZ7C013IRR1501 | Backfilling and warning tape works for HDPE Pipline 180 mm - (RD-C-1/3)-Z7-C013-IRR | 2027-03-08 → 2027-03-04 (-4d) | 2027-03-16 → 2027-03-08 (-8d) | -174.02d → -171d |
| 7274 | **RHD4-02-002-Z7-C013-Medium Voltage Network - MV** | 2027-04-12 → 2027-04-13 (+1d) | 2027-05-02 → 2027-05-03 (+1d) |  |
| 7275 | **RHD4-02-002-C013-(MV)-Medium Voltage cable trench** | 2027-04-12 → 2027-04-13 (+1d) | 2027-04-29 → 2027-05-01 (+2d) |  |
| RHD4CZ7C013MV1100 | Excavation for Medium Voltage Trench - (RD-C-1/3)-Z7-C013-MV | 2027-04-12 → 2027-04-13 (+1d) | 2027-04-15 → 2027-04-17 (+2d) | -185d → -186d |
| RHD4CZ7C013MV1200 | Trench Backfilling for Medium Voltage Network - (RD-C-1/3)-Z7-C013-MV | 2027-04-26 → 2027-04-27 (+1d) | 2027-04-29 → 2027-05-01 (+2d) | -185d → -186d |
| 7277 | **RHD4-02-002-C013-(MV)-Medium Voltage cables 3Cx 500 mm²** | 2027-04-17 → 2027-04-18 (+1d) | 2027-05-02 → 2027-05-03 (+1d) |  |
| RHD4CZ7C013MV3100 | Installation of Medium Voltage Cables 3Cx 500 mm² - (RD-C-1/3)-Z7-C013-MV | 2027-04-17 → 2027-04-18 (+1d) | 2027-04-22 → 2027-04-24 (+2d) | -185d → -186d |
| RHD4CZ7C013MV3200 | Joints Installation of Medium Voltage Cables 3Cx 500 mm² - (RD-C-1/3)-Z7-C013-MV | 2027-04-24 → 2027-04-25 (+1d) | 2027-04-25 → 2027-04-26 (+1d) | -185d → -186d |
| RHD4CZ7C013MV3300 | Testing of Medium Voltage Cables 3Cx 500 mm² - (RD-C-1/3)-Z7-C013-MV | 2027-05-01 → 2027-05-02 (+1d) | 2027-05-02 → 2027-05-03 (+1d) | -185d → -186d |
| 7287 | **RHD4-02-002-Z7-C013-Street Lighting Network - SL** | 2027-05-03 → 2027-05-04 (+1d) | 2027-06-03 → 2027-06-05 (+2d) |  |
| 7290 | **RHD4-02-002-C013-(SL)-Street Lighting cables** | 2027-05-03 → 2027-05-04 (+1d) | 2027-05-19 → 2027-05-20 (+1d) |  |
| RHD4CZ7C013SL3100 | Excavation for Street Lighting Cables for Street Lighting Network - (RD-C-1/3)-Z7-C013-SL | 2027-05-03 → 2027-05-04 (+1d) | 2027-05-05 → 2027-05-06 (+1d) | -117d → -118d |
| RHD4CZ7C013SL3200 | Cable Laying of Street Lighting Cables for Street Lighting Network - (RD-C-1/3)-Z7-C013-SL | 2027-05-06 → 2027-05-08 (+2d) | 2027-05-09 → 2027-05-10 (+1d) | -117d → -118d |
| RHD4CZ7C013SL3300 | Warning tape and Backfill for Street Lighting Cables for Street Lighting Network - (RD-C-1/3)-Z7-C013-SL | 2027-05-10 → 2027-05-11 (+1d) | 2027-05-12 → 2027-05-13 (+1d) | -117d → -118d |
| RHD4CZ7C013SL3400 | Testing of Street Lighting Cables for Street Lighting Network - (RD-C-1/3)-Z7-C013-SL | 2027-05-13 → 2027-05-19 (+6d) | 2027-05-19 → 2027-05-20 (+1d) | -117d → -118d |
| 7291 | **RHD4-02-002-C013-(SL)-Street Lighting Poles** | 2027-05-20 → 2027-05-22 (+2d) | 2027-06-01 → 2027-06-02 (+1d) |  |
| RHD4CZ7C013SL1100 | Excavation for RC Base for Lighting Poles for Street Lighting Network - (RD-C-1/3)-Z7-C013-SL | 2027-05-20 → 2027-05-22 (+2d) | 2027-05-22 → 2027-05-23 (+1d) | -117d → -118d |
| RHD4CZ7C013SL1200 | Installation for RC Base for Lighting Poles for Street Lighting Network - (RD-C-1/3)-Z7-C013-SL | 2027-05-23 → 2027-05-24 (+1d) | 2027-05-24 → 2027-05-25 (+1d) | -117d → -118d |
| RHD4CZ7C013SL1300 | Backfill for RC Base for Lighting Poles for Street Lighting Network - (RD-C-1/3)-Z7-C013-SL | 2027-05-25 → 2027-05-26 (+1d) | 2027-05-26 → 2027-05-27 (+1d) | -117d → -118d |
| RHD4CZ7C013SL1400 | Installation for Lighting Poles for Street Lighting Network - (RD-C-1/3)-Z7-C013-SL | 2027-05-27 → 2027-05-29 (+2d) | 2027-05-29 → 2027-05-30 (+1d) | -117d → -118d |
| RHD4CZ7C013SL1500 | Luminaire Installation for Lighting Poles for Street Lighting Network - (RD-C-1/3)-Z7-C013-SL | 2027-05-30 → 2027-05-31 (+1d) | 2027-06-01 → 2027-06-02 (+1d) | -117d → -118d |
| 7293 | **RHD4-02-002-C013-(SL)-Street Lighting Earthing System** | 2027-06-02 → 2027-06-03 (+1d) | 2027-06-03 → 2027-06-05 (+2d) |  |
| RHD4CZ7C013SL6100 | Installation of Earthing for Lighting Poles and Fedder Pillers for Street Lighting Network - (RD-C-1/3)-Z7-C013-SL | 2027-06-02 → 2027-06-03 (+1d) | 2027-06-03 → 2027-06-05 (+2d) | -117d → -118d |
| 7299 | **RHD4-02-002-Z7-C013-Telecommunications Network - TC** | 2027-06-05 → 2027-06-06 (+1d) | 2027-06-16 → 2027-06-17 (+1d) |  |
| 7300 | **RHD4-02-002-C013-(TC)-Telecommunications Ducts** | 2027-06-05 → 2027-06-06 (+1d) | 2027-06-16 → 2027-06-17 (+1d) |  |
| RHD4CZ7C013TC2100 | Excavation of HDPE Ducts for Telecom Network - (RD-C-1/3)-Z7-C013-TC | 2027-06-05 → 2027-06-06 (+1d) | 2027-06-07 → 2027-06-08 (+1d) | -117d → -118d |
| RHD4CZ7C013TC2200 | Installation of HDPE Ducts for Telecom Network - (RD-C-1/3)-Z7-C013-TC | 2027-06-08 → 2027-06-09 (+1d) | 2027-06-13 → 2027-06-14 (+1d) | -117d → -118d |
| RHD4CZ7C013TC2400 | Backfilling of HDPE Ducts for Telecom Network - (RD-C-1/3)-Z7-C013-TC | 2027-06-14 → 2027-06-15 (+1d) | 2027-06-16 → 2027-06-17 (+1d) | -117d → -118d |
| 7301 | **RHD4-02-002-C013-(TC)-Telecommunications Manholes** | 2027-06-08 → 2027-06-09 (+1d) | 2027-06-12 → 2027-06-13 (+1d) |  |
| RHD4CZ7C013TC5100 | Excavation for Manholes for Telecom Network - (RD-C-1/3)-Z7-C013-TC | 2027-06-08 → 2027-06-09 (+1d) | 2027-06-09 → 2027-06-10 (+1d) | -116d → -117d |
| RHD4CZ7C013TC5200 | Installation of Manholes for Telecom Network - (RD-C-1/3)-Z7-C013-TC | 2027-06-10 → 2027-06-12 (+2d) | 2027-06-12 → 2027-06-13 (+1d) | -116d → -117d |
| 7303 | **RHD4-02-002-Z7-C013-Information and Communication Technologies - ICT** | 2027-06-17 → 2027-06-19 (+2d) | 2027-07-11 → 2027-07-12 (+1d) |  |
| 7304 | **RHD4-02-002-C013-(ICT)-Information and Communication Technologies Ducts** | 2027-06-17 → 2027-06-19 (+2d) | 2027-07-11 → 2027-07-12 (+1d) |  |
| RHD4CZ7C013ICT2100 | Excavation of HDPE Ducts for ICT Network - (RD-C-1/3)-Z7-C013-ICT | 2027-06-17 → 2027-06-19 (+2d) | 2027-06-23 → 2027-06-24 (+1d) | -117d → -118d |
| RHD4CZ7C013ICT2200 | Installation of HDPE Ducts for ICT Network - (RD-C-1/3)-Z7-C013-ICT | 2027-06-24 → 2027-06-26 (+2d) | 2027-07-04 → 2027-07-05 (+1d) | -117d → -118d |
| RHD4CZ7C013ICT2400 | Backfilling of HDPE Ducts for ICT Network - (RD-C-1/3)-Z7-C013-ICT | 2027-07-05 → 2027-07-06 (+1d) | 2027-07-11 → 2027-07-12 (+1d) | -117d → -118d |
| 7305 | **RHD4-02-002-C013-(ICT)-Information and Communication Technologies Manholes** | 2027-06-24 → 2027-06-26 (+2d) | 2027-06-28 → 2027-06-29 (+1d) |  |
| RHD4CZ7C013ICT5100 | Excavation for Manholes for ICT Network - (RD-C-1/3)-Z7-C013-ICT | 2027-06-24 → 2027-06-26 (+2d) | 2027-06-26 → 2027-06-27 (+1d) | -112d → -113d |

| ID | Task | Start | Finish | Complete | Total float |
| --- | --- | --- | --- | --- | --- |
| RHD4CZ7C013ICT5200 | Installation of Manholes for ICT Network - (RD-C-1/3)-Z7-C013-ICT | 2027-06-27 → 2027-06-28 (+1d) | 2027-06-28 → 2027-06-29 (+1d) |  | -112d → -113d |
| 6568 | **RHD4-02-002-Z7-L015** |  | 2028-05-29 → 2028-05-27 (-2d) |  |  |
| 6747 | **RHD4-02-002-Z7-L015-Road Works - RD** |  | 2028-05-29 → 2028-05-27 (-2d) |  |  |
| 6749 | **RHD4-02-002-L015-(RD)-Aggregate Base Course** | 2027-02-11 → 2027-02-08 (-3d) | 2027-02-18 → 2027-02-14 (-4d) |  |  |
| RHD4CZ7L015RD2100 | Supply, lay and compaction Aggregate base course compacted thickness 300 mmfor Roads - (RD-L-15)-Z7-L015-RD | 2027-02-11 → 2027-02-08 (-3d) | 2027-02-18 → 2027-02-14 (-4d) |  | -193.02d → -190d |
| 6750 | **RHD4-02-002-L015-(RD)-Bituminous base course Two Layers, including (MC1)&(RC2)** | 2027-02-18 → 2027-02-15 (-3d) | 2028-04-18 → 2028-04-15 (-3d) |  |  |
| RHD4CZ7L015RD3100 | Supply, lay and Asphaltic base course including Prime Coat (MC1) for 1st Layer - (RD-L-15)-Z7-L015-RD | 2027-02-18 → 2027-02-15 (-3d) | 2027-02-21 → 2027-02-16 (-5d) |  | -193.02d → -190d |
| RHD4CZ7L015RD3200 | Supply, lay and Asphaltic base course including Tack Coat (RC2) for 2nd Layer - (RD-L-15)-Z7-L015-RD | 2028-04-16 → 2028-04-13 (-3d) | 2028-04-18 → 2028-04-15 (-3d) |  | -177.02d → -175d |
| 6752 | **RHD4-02-002-L015-(RD)-Precast Concrete Curb** | 2028-04-18 → 2028-04-16 (-2d) | 2028-04-25 → 2028-04-22 (-3d) |  |  |
| RHD4CZ7L015RD5100 | Supply and installation Precast Concrete Kerb for Roads - (RD-L-15)-Z7-L015-RD | 2028-04-18 → 2028-04-16 (-2d) | 2028-04-25 → 2028-04-22 (-3d) |  | -156.02d → -154d |
| 6755 | **RHD4-02-002-L015-(RD)-Traffic Signage** | 2028-04-25 → 2028-04-23 (-2d) | 2028-05-08 → 2028-05-01 (-7d) |  |  |
| RHD4CZ7L015RD8100 | Installation of Traffic Signage for Road Network - (RD-L-15)-Z7-L015-RD | 2028-04-25 → 2028-04-23 (-2d) | 2028-05-08 → 2028-05-01 (-7d) |  | -156.02d → -154d |
| 6753 | **RHD4-02-002-L015-(RD)-Precast Interlocking Block Pavers** | 2028-05-08 → 2028-05-02 (-6d) | 2028-05-16 → 2028-05-13 (-3d) |  |  |
| RHD4CZ7L015RD6100 | Interlocking block pavers for sidewalk-footpath for Side walks and Parking areas - (RD-L-15)-Z7-L015-RD | 2028-05-08 → 2028-05-02 (-6d) | 2028-05-16 → 2028-05-13 (-3d) |  | -156.02d → -154d |
| 6751 | **RHD4-02-002-L015-(RD)-Bituminous concrete wearing course including tack coat (RC2)** | 2028-05-23 → 2028-05-21 (-2d) | 2028-05-25 → 2028-05-23 (-2d) |  |  |
| RHD4CZ7L015RD4100 | Supply, lay and compaction Asphaltic wearing course including tack Coat (RC2)for Road Network - (RD-L-15)-Z7-L015-RD | 2028-05-23 → 2028-05-21 (-2d) | 2028-05-25 → 2028-05-23 (-2d) |  | -162.06d → -160.05d |
| 6754 | **RHD4-02-002-L015-(RD)-Pavement Marking** | 2028-05-25 → 2028-05-23 (-2d) | 2028-05-29 → 2028-05-27 (-2d) |  |  |
| RHD4CZ7L015RD7100 | Pavement Markings for Road Network - (RD-L-15)-Z7-L015-RD | 2028-05-25 → 2028-05-23 (-2d) | 2028-05-29 → 2028-05-27 (-2d) |  | -157.06d → -155.05d |
| 6572 | **RHD4-02-002-Z7-L015-Storm Network - ST** |  | 2027-05-29 → 2027-05-24 (-5d) |  |  |
| 6577 | **RHD4-02-002-L015-(ST)-GRP Pipes - 800 mm diameter** |  | 2027-05-19 → 2027-05-11 (-8d) |  |  |
| RHD4CZ7L015ST1104 | Excavation works for GRP Pipe Line 800 mm - (RD-L-15)-Z7-L015-ST |  | 2026-08-16 A → 2027-04-15 (+242d) | 100% → 50% | none → -94d |
| RHD4CZ7L015ST1204 | Bedding works for GRP Pipe Line 800 mm - (RD-L-15)-Z7-L015-ST |  | 2026-08-19 A → 2027-04-17 (+241d) | 100% → 50% | none → -64d |
| RHD4CZ7L015ST1304 | Installing for GRP Pipe Line 800 mm - (RD-L-15)-Z7-L015-ST |  | 2026-08-22 A → 2027-05-06 (+257d) | 100% → 50% | none → -80d |
| RHD4CZ7L015ST1504 | Backfilling and warning tape works for GRP Pipe Line 800 mm - (RD-L-15)-Z7-L015-ST |  | 2027-05-19 → 2027-05-11 (-8d) |  | -83d → -80d |
| RHD4CZ7L015ST1404 | Primary Test for GRP Pipe Line 800 mm - (RD-L-15)-Z7-L015-ST | 2027-05-11 → 2027-05-08 (-3d) | 2027-05-12 → 2027-05-09 (-3d) |  | -83d → -80d |
| 5254 | **RHD4-02-002-L015-(ST)-GRP Pipes - 900 mm diameter** |  | 2027-02-11 → 2027-02-07 (-4d) |  |  |
| RHD4CZ7L015ST1405 | Primary Test for GRP Pipe Line 900 mm - (RD-L-15)-Z7-L015-ST | 2027-02-09 → 2027-02-06 (-3d) | 2027-02-11 → 2027-02-07 (-4d) |  | -193.02d → -190d |
| 6008 | **RHD4-02-002-L015-(ST)-GRP Pipes - 600 mm diameter** |  | 2027-05-10 → 2027-05-05 (-5d) |  |  |
| RHD4CZ7L015ST1102 | Excavation works for GRP Pipe Line 600 mm - (RD-L-15)-Z7-L015-ST |  | 2027-04-25 → 2027-04-20 (-5d) |  | -95d → -91d |
| RHD4CZ7L015ST1202 | Bedding works for GRP Pipe Line 600 mm - (RD-L-15)-Z7-L015-ST |  | 2027-04-27 → 2027-04-22 (-5d) |  | -87d → -83d |
| RHD4CZ7L015ST1302 | Installing for GRP Pipe Line 600 mm - (RD-L-15)-Z7-L015-ST |  | 2027-04-29 → 2027-04-25 (-4d) |  | -87d → -83d |
| RHD4CZ7L015ST1502 | Backfilling and warning tape works for GRP Pipe Line 600 mm - (RD-L-15)-Z7-L015-ST |  | 2027-05-10 → 2027-05-05 (-5d) |  | -79d → -75d |
| RHD4CZ7L015ST1402 | Primary Test for GRP Pipe Line 600 mm - (RD-L-15)-Z7-L015-ST | 2027-05-01 → 2027-04-26 (-5d) | 2027-05-02 → 2027-04-27 (-5d) |  | -87d → -83d |
| 6590 | **RHD4-02-002-L015-(ST)-MH Works - 1500 mm diameter** |  | 2027-05-29 → 2027-05-24 (-5d) |  |  |
| RHD4CZ7L015ST3101 | Excavation and PC Blinding works for MH 1500 mm - (RD-L-15)-Z7-L015-ST |  | 2027-04-29 → 2027-04-25 (-4d) |  | -95d → -91d |
| RHD4CZ7L015ST3201 | Installation of Base for MH 1500 mm - (RD-L-15)-Z7-L015-ST |  | 2027-05-02 → 2027-04-27 (-5d) | 69% → 92% | -93d → -89d |
| RHD4CZ7L015ST3301 | MH Ring and C.Slab works and Backfilling works for MH 1500 mm - (RD-L-15)-Z7-L015-ST | 2027-05-03 → 2027-04-28 (-5d) | 2027-05-10 → 2027-05-05 (-5d) |  | -93d → -89d |
| RHD4CZ7L015ST3401 | Steel Cover for MH 1500 mm - (RD-L-15)-Z7-L015-ST | 2027-05-11 → 2027-05-06 (-5d) | 2027-05-20 → 2027-05-11 (-9d) |  | -93d → -89d |
| RHD4CZ7L015ST3501 | Finishing, Benching, Testing works for MH 1500 mm - (RD-L-15)-Z7-L015-ST | 2027-05-22 → 2027-05-12 (-10d) | 2027-05-29 → 2027-05-24 (-5d) |  | -93d → -89d |
| 6589 | **RHD4-02-002-L015-(ST)-MH Works - 1200 mm diameter** |  | 2027-05-06 → 2027-05-02 (-4d) |  |  |
| RHD4CZ7L015ST3300 | MH Ring and C.Slab works and Backfilling works for MH 1200 mm - (RD-L-15)-Z7-L015-ST | 2027-05-01 → 2027-04-26 (-5d) | 2027-05-02 → 2027-04-27 (-5d) |  | -95d → -91d |
| RHD4CZ7L015ST3400 | Steel Cover for MH 1200 mm - (RD-L-15)-Z7-L015-ST | 2027-05-03 → 2027-04-28 (-5d) | 2027-05-04 → 2027-04-29 (-5d) |  | -95d → -91d |
| RHD4CZ7L015ST3500 | Finishing, Benching, Testing works for MH 1200 mm - (RD-L-15)-Z7-L015-ST | 2027-05-05 → 2027-05-01 (-4d) | 2027-05-06 → 2027-05-02 (-4d) |  | -95d → -91d |
| 6576 | **RHD4-02-002-L015-(ST)-GRP Pipes - 700 mm diameter** |  | 2027-05-22 → 2027-05-13 (-9d) |  |  |
| RHD4CZ7L015ST1103 | Excavation works for GRP Pipe Line 700 mm - (RD-L-15)-Z7-L015-ST |  | 2027-04-22 → 2027-04-18 (-4d) | 61% → 40% | -95d → -91d |
| RHD4CZ7L015ST1203 | Bedding works for GRP Pipe Line 700 mm - (RD-L-15)-Z7-L015-ST |  | 2027-04-25 → 2027-04-20 (-5d) | 61% → 40% | -70d → -66d |
| RHD4CZ7L015ST1303 | Installing for GRP Pipe Line 700 mm - (RD-L-15)-Z7-L015-ST |  | 2027-05-12 → 2027-05-08 (-4d) | 61% → 40% | -83d → -79d |
| RHD4CZ7L015ST1503 | Backfilling and warning tape works for GRP Pipe Line 700 mm - (RD-L-15)-Z7-L015-ST |  | 2027-05-22 → 2027-05-13 (-9d) | 61% → 40% | -83d → -80d |
| RHD4CZ7L015ST1403 | Primary Test for GRP Pipe Line 700 mm - (RD-L-15)-Z7-L015-ST | 2027-05-13 → 2027-05-09 (-4d) | 2027-05-19 → 2027-05-10 (-9d) |  | -83d → -79d |
| 6587 | **RHD4-02-002-L015-(ST)-UPVC Pipes - 300 mm diameter** |  | 2027-05-10 → 2027-05-05 (-5d) |  |  |
| RHD4CZ7L015ST2100 | Excavation works for UPVC Pipe Line 300 mm - (RD-L-15)-Z7-L015-ST |  | 2027-04-28 → 2027-04-24 (-4d) | 100% → 56% | -95d → -91d |
| RHD4CZ7L015ST2300 | Installing for UPVC Pipe Line 300 mm - (RD-L-15)-Z7-L015-ST | 2027-05-02 → 2026-11-08 A (-175d) | 2027-05-04 → 2027-04-29 (-5d) | 0% → 68% | -79d → -75d |
| RHD4CZ7L015ST2200 | Bedding works for UPVC Pipe Line 300 mm - (RD-L-15)-Z7-L015-ST | 2027-04-29 → 2026-11-12 A (-168d) | 2027-05-01 → 2027-04-26 (-5d) | 0% → 65% | -79d → -75d |
| RHD4CZ7L015ST2400 | Primary Test for UPVC Pipe Line 300 mm - (RD-L-15)-Z7-L015-ST | 2027-05-05 → 2027-05-01 (-4d) | 2027-05-06 → 2027-05-02 (-4d) |  | -79d → -75d |
| RHD4CZ7L015ST2500 | Backfilling and warning tape works for UPVC Pipe Line 300 mm - (RD-L-15)-Z7-L015-ST | 2027-05-08 → 2027-05-03 (-5d) | 2027-05-10 → 2027-05-05 (-5d) |  | -79d → -75d |
| 6595 | **RHD4-02-002-L015-(ST)-Concrete Encasement** | 2027-05-02 → 2027-04-27 (-5d) | 2027-05-03 → 2027-04-28 (-5d) |  |  |
| RHD4CZ7L015ST6100 | Pipe Encasement for Storm Pipelines - (RD-L-15)-Z7-L015-ST | 2027-05-02 → 2027-04-27 (-5d) | 2027-05-03 → 2027-04-28 (-5d) |  | -76d → -72d |
| 6596 | **RHD4-02-002-Z7-L015-Catch Basin - ST** |  | 2027-05-26 → 2027-05-22 (-4d) |  |  |
| 6597 | **RHD4-02-002-L015-(ST)-Single Catch Basin Works** |  | 2027-05-26 → 2027-05-22 (-4d) |  |  |
| RHD4CZ7L015ST7100 | Excavation works for Single Catch Basin - (RD-L-15)-Z7-L015-ST |  | 2027-05-03 → 2027-04-28 (-5d) |  | -87d → -83d |
| RHD4CZ7L015ST7200 | PC Blinding, Installation and Pipe connection for Single Catch Basin - (RD-L-15)-Z7-L015-ST |  | 2027-05-06 → 2027-05-02 (-4d) |  | -87d → -83d |
| RHD4CZ7L015ST7300 | Rings & C.Slab & Final Backfill for Single Catch Basin - (RD-L-15)-Z7-L015-ST |  | 2027-05-11 → 2027-05-06 (-5d) |  | -87d → -83d |
| RHD4CZ7L015ST7400 | Steel Cover for Single Catch Basin - (RD-L-15)-Z7-L015-ST | 2027-05-12 → 2027-05-08 (-4d) | 2027-05-19 → 2027-05-10 (-9d) |  | -87d → -83d |
| RHD4CZ7L015ST7500 | Finishing and Insulation works for Single Catch Basin - (RD-L-15)-Z7-L015-ST | 2027-05-20 → 2027-05-11 (-9d) | 2027-05-26 → 2027-05-22 (-4d) |  | -87d → -83d |
| 6621 | **RHD4-02-002-Z7-L015-Sewage Network - SW** |  | 2027-07-03 → 2027-06-28 (-5d) |  |  |
| 6627 | **RHD4-02-002-L015-(SW)-UPVC Pipes - 200 mm diameter** |  | 2027-05-30 → 2027-05-25 (-5d) |  |  |
| RHD4CZ7L015SW2400 | Primary Test for UPVC Pipe Line 200 mm - (RD-L-15)-Z7-L015-SW |  | 2027-05-30 → 2027-05-25 (-5d) |  | -87d → -83d |
| 6631 | **RHD4-02-002-L015-(SW)-MH Works - 1200 mm diameter** |  | 2027-07-03 → 2027-06-28 (-5d) |  |  |
| RHD4CZ7L015SW3300 | MH Ring and C.Slab works and Backfilling works for MH 1200 mm - (RD-L-15)-Z7-L015-SW | 2027-05-27 → 2027-05-23 (-4d) | 2027-06-09 → 2027-06-05 (-4d) |  | -66d → -62d |
| RHD4CZ7L015SW3400 | Steel Cover for MH 1200 mm - (RD-L-15)-Z7-L015-SW | 2027-06-10 → 2027-06-06 (-4d) | 2027-06-19 → 2027-06-14 (-5d) |  | -66d → -62d |

| ID | Task | Start | Finish | Total float |
| --- | --- | --- | --- | --- |
| RHD4CZ7L015SW3500 | Finishing, Benching, Testing works for MH 1200 mm - (RD-L-15)-Z7-L015-SW | 2027-06-20 → 2027-06-15 (-5d) | 2027-07-03 → 2027-06-28 (-5d) | -66d → -62d |
| 6658 | **RHD4-02-002-Z7-L015-Potable Network - PT** | 2027-05-31 → 2027-05-26 (-5d) | 2027-10-04 → 2027-09-29 (-5d) |  |
| 6659 | **RHD4-02-002-L015-(PT)-HDPE Pipes - 110 mm diameter** | 2027-06-05 → 2027-05-31 (-5d) | 2027-09-01 → 2027-08-28 (-4d) |  |
| RHD4CZ7L015PT1100 | Excavation works for HDPE Pipline 110 mm - (RD-L-15)-Z7-L015-PT | 2027-06-05 → 2027-05-31 (-5d) | 2027-06-06 → 2027-06-01 (-5d) | -87d → -83d |
| RHD4CZ7L015PT1200 | Bedding works for HDPE Pipline 110 mm - (RD-L-15)-Z7-L015-PT | 2027-06-08 → 2027-06-03 (-5d) | 2027-06-09 → 2027-06-05 (-4d) | -73d → -69d |
| RHD4CZ7L015PT1300 | Installing for HDPE Pipline 110 mm - (RD-L-15)-Z7-L015-PT | 2027-06-15 → 2027-06-10 (-5d) | 2027-06-16 → 2027-06-12 (-4d) | -77d → -73d |
| RHD4CZ7L015PT1400 | Primary Test for HDPE Pipline 110 mm - (RD-L-15)-Z7-L015-PT | 2027-08-25 → 2027-08-22 (-3d) | 2027-08-28 → 2027-08-23 (-5d) | -129.02d → -126d |
| RHD4CZ7L015PT1500 | Backfilling and warning tape works for HDPE Pipline 110 mm - (RD-L-15)-Z7-L015-PT | 2027-08-30 → 2027-08-26 (-4d) | 2027-09-01 → 2027-08-28 (-4d) | -131.02d → -128d |
| 6660 | **RHD4-02-002-L015-(PT)-HDPE Pipes - 160 mm diameter** | 2027-05-31 → 2027-05-26 (-5d) | 2027-08-30 → 2027-08-25 (-5d) |  |
| RHD4CZ7L015PT1101 | Excavation works for HDPE Pipline 160 mm - (RD-L-15)-Z7-L015-PT | 2027-05-31 → 2027-05-26 (-5d) | 2027-06-03 → 2027-05-30 (-4d) | -87d → -83d |
| RHD4CZ7L015PT1201 | Bedding works for HDPE Pipline 160 mm - (RD-L-15)-Z7-L015-PT | 2027-06-05 → 2027-05-31 (-5d) | 2027-06-07 → 2027-06-02 (-5d) | -77d → -73d |
| RHD4CZ7L015PT1301 | Installing for HDPE Pipline 160 mm - (RD-L-15)-Z7-L015-PT | 2027-06-08 → 2027-06-03 (-5d) | 2027-06-14 → 2027-06-09 (-5d) | -77d → -73d |
| RHD4CZ7L015PT1401 | Primary Test for HDPE Pipline 160 mm - (RD-L-15)-Z7-L015-PT | 2027-08-23 → 2027-08-19 (-4d) | 2027-08-25 → 2027-08-21 (-4d) | -131.02d → -128d |
| RHD4CZ7L015PT1501 | Backfilling and warning tape works for HDPE Pipline 160 mm - (RD-L-15)-Z7-L015-PT | 2027-08-25 → 2027-08-22 (-3d) | 2027-08-30 → 2027-08-25 (-5d) | -131.02d → -128d |
| 6664 | **RHD4-02-002-L015-(PT)-Gate Valves (Direct Buried)** | 2027-06-15 → 2027-06-10 (-5d) | 2027-09-04 → 2027-08-30 (-5d) |  |
| RHD4CZ7L015PT3100 | Installation for Direct Buried Gate Valves - (RD-L-15)-Z7-L015-PT | 2027-06-15 → 2027-06-10 (-5d) | 2027-06-16 → 2027-06-12 (-4d) | -66d → -62d |
| RHD4CZ7L015PT3200 | Stem and Service box for Direct Buried Gate Valves - (RD-L-15)-Z7-L015-PT | 2027-09-01 → 2027-08-29 (-3d) | 2027-09-04 → 2027-08-30 (-5d) | -131.02d → -128d |
| 6667 | **RHD4-02-002-L015-(PT)-Wash out Valve Chambers** | 2027-08-30 → 2027-08-26 (-4d) | 2027-09-08 → 2027-09-04 (-4d) |  |
| RHD4CZ7L015PT2101 | Excavation and Bedding for Wash out Valve Chambers for Potable Water Network - (RD-L-15)-Z7-L015-PT | 2027-08-30 → 2027-08-26 (-4d) | 2027-09-01 → 2027-08-28 (-4d) | -119.02d → -116d |
| RHD4CZ7L015PT2201 | PC works for Wash out Valve Chambers for Potable Water Network - (RD-L-15)-Z7-L015-PT | 2027-09-01 → 2027-08-29 (-3d) | 2027-09-04 → 2027-08-30 (-5d) | -119.02d → -116d |
| RHD4CZ7L015PT2301 | Installation for Wash out Valve Chambers for Potable Water Network - (RD-L-15)-Z7-L015-PT | 2027-09-04 → 2027-08-31 (-4d) | 2027-09-06 → 2027-09-01 (-5d) | -119.02d → -116d |
| RHD4CZ7L015PT2401 | Backfilling works for Wash out Valve Chambers for Potable Water Network - (RD-L-15)-Z7-L015-PT | 2027-09-06 → 2027-09-02 (-4d) | 2027-09-08 → 2027-09-04 (-4d) | -119.02d → -116d |
| 6668 | **RHD4-02-002-L015-(PT)-Wash out Valves** | 2027-09-06 → 2027-09-02 (-4d) | 2027-09-11 → 2027-09-06 (-5d) |  |
| RHD4CZ7L015PT3102 | Installation for Wash out Valves for Potable Water Network - (RD-L-15)-Z7-L015-PT | 2027-09-06 → 2027-09-02 (-4d) | 2027-09-08 → 2027-09-04 (-4d) | -119.02d → -116d |
| RHD4CZ7L015PT3202 | Stem and Service box for Wash out Valves for Potable Water Network - (RD-L-15)-Z7-L015-PT | 2027-09-08 → 2027-09-05 (-3d) | 2027-09-11 → 2027-09-06 (-5d) | -119.02d → -116d |
| 6671 | **RHD4-02-002-L015-(PT)-Fire Hydrant** | 2027-09-11 → 2027-09-07 (-4d) | 2027-10-04 → 2027-09-29 (-5d) |  |
| RHD4CZ7L015PT4100 | Excavation and Bedding and Pipe Installation for Fire Hydrant - (RD-L-15)-Z7-L015-PT | 2027-09-11 → 2027-09-07 (-4d) | 2027-09-16 → 2027-09-12 (-4d) | -119.02d → -116d |
| RHD4CZ7L015PT4200 | Valve Installation for Fire Hydrant - (RD-L-15)-Z7-L015-PT | 2027-09-16 → 2027-09-13 (-3d) | 2027-09-21 → 2027-09-16 (-5d) | -119.02d → -116d |
| RHD4CZ7L015PT4300 | Stem for Fire Hydrant - (RD-L-15)-Z7-L015-PT | 2027-09-21 → 2027-09-18 (-3d) | 2027-09-27 → 2027-09-21 (-6d) | -119.02d → -116d |
| RHD4CZ7L015PT4400 | Fire Installation for Fire Hydrant - (RD-L-15)-Z7-L015-PT | 2027-09-27 → 2027-09-22 (-5d) | 2027-10-02 → 2027-09-27 (-5d) | -119.02d → -116d |
| RHD4CZ7L015PT4500 | Protection Barriers for Fire Hydrant - (RD-L-15)-Z7-L015-PT | 2027-10-02 → 2027-09-28 (-4d) | 2027-10-04 → 2027-09-29 (-5d) | -119.02d → -116d |
| 6672 | **RHD4-02-002-L015-(PT)-Concrete Encasement** | 2027-06-15 → 2027-06-10 (-5d) | 2027-06-20 → 2027-06-15 (-5d) |  |
| RHD4CZ7L015PT5100 | Pipe Encasement for Potable Pipelines - (RD-L-15)-Z7-L015-PT | 2027-06-15 → 2027-06-10 (-5d) | 2027-06-20 → 2027-06-15 (-5d) | -77d → -73d |
| 6673 | **RHD4-02-002-Z7-L015-Irrigation Network - IRR** | 2027-06-07 → 2027-06-02 (-5d) | 2027-11-24 → 2027-11-21 (-3d) |  |
| 6674 | **RHD4-02-002-L015-(IRR)-HDPE Pipes - 160 mm diameter** | 2027-06-07 → 2027-06-02 (-5d) | 2027-07-04 → 2027-06-29 (-5d) |  |
| RHD4CZ7L015IRR1100 | Excavation works for HDPE Pipline 160 mm - (RD-L-15)-Z7-L015-IRR | 2027-06-07 → 2027-06-02 (-5d) | 2027-06-13 → 2027-06-08 (-5d) | -87d → -83d |
| RHD4CZ7L015IRR1200 | Bedding works for HDPE Pipline 160 mm - (RD-L-15)-Z7-L015-IRR | 2027-06-14 → 2027-06-09 (-5d) | 2027-06-19 → 2027-06-14 (-5d) | -87d → -83d |
| RHD4CZ7L015IRR1300 | Installing for HDPE Pipline 160 mm - (RD-L-15)-Z7-L015-IRR | 2027-06-20 → 2027-06-15 (-5d) | 2027-06-26 → 2027-06-21 (-5d) | -87d → -83d |
| RHD4CZ7L015IRR1400 | Primary Test for HDPE Pipline 160 mm - (RD-L-15)-Z7-L015-IRR | 2027-06-27 → 2027-06-22 (-5d) | 2027-06-28 → 2027-06-23 (-5d) | -87d → -83d |
| RHD4CZ7L015IRR1500 | Backfilling and warning tape works for HDPE Pipline 160 mm - (RD-L-15)-Z7-L015-IRR | 2027-06-29 → 2027-06-24 (-5d) | 2027-07-04 → 2027-06-29 (-5d) | -87d → -83d |
| 6682 | **RHD4-02-002-L015-(IRR)-Gate Valves (Direct Buried)** | 2027-06-24 → 2027-06-20 (-4d) | 2027-07-06 → 2027-07-01 (-5d) |  |
| RHD4CZ7L015IRR3100 | Installation for Direct Buried Gate Valves - (RD-L-15)-Z7-L015-IRR | 2027-06-24 → 2027-06-20 (-4d) | 2027-06-26 → 2027-06-21 (-5d) | -66d → -62d |
| RHD4CZ7L015IRR3200 | Stem and Service box for Direct Buried Gate Valves - (RD-L-15)-Z7-L015-IRR | 2027-07-05 → 2027-06-30 (-5d) | 2027-07-06 → 2027-07-01 (-5d) | -73d → -69d |
| 6685 | **RHD4-02-002-L015-(IRR)-Wash out Chamber** | 2027-07-05 → 2027-06-30 (-5d) | 2027-07-13 → 2027-07-08 (-5d) |  |
| RHD4CZ7L015IRR2101 | Excavation and Bedding for Wash out Chamber for Irrigation Network - (RD-L-15)-Z7-L015-IRR | 2027-07-05 → 2027-06-30 (-5d) | 2027-07-06 → 2027-07-01 (-5d) | -77d → -73d |
| RHD4CZ7L015IRR2201 | PC works for Wash out Chamber for Irrigation Network - (RD-L-15)-Z7-L015-IRR | 2027-07-07 → 2027-07-03 (-4d) | 2027-07-08 → 2027-07-04 (-4d) | -77d → -73d |
| RHD4CZ7L015IRR2301 | Installation for Wash out Chamber for Irrigation Network - (RD-L-15)-Z7-L015-IRR | 2027-07-10 → 2027-07-05 (-5d) | 2027-07-11 → 2027-07-06 (-5d) | -77d → -73d |
| RHD4CZ7L015IRR2401 | Backfilling works for Wash out Chamber for Irrigation Network - (RD-L-15)-Z7-L015-IRR | 2027-07-12 → 2027-07-07 (-5d) | 2027-07-13 → 2027-07-08 (-5d) | -77d → -73d |
| 6686 | **RHD4-02-002-L015-(IRR)-Wash out Valves** | 2027-11-20 → 2027-11-17 (-3d) | 2027-11-24 → 2027-11-21 (-3d) |  |
| RHD4CZ7L015IRR3102 | Installation for Wash out Valve for Irrigation Network - (RD-L-15)-Z7-L015-IRR | 2027-11-20 → 2027-11-17 (-3d) | 2027-11-22 → 2027-11-18 (-4d) | -188.02d → -186d |
| RHD4CZ7L015IRR3202 | Stem and Service box for Wash out Valve for Irrigation Network - (RD-L-15)-Z7-L015-IRR | 2027-11-22 → 2027-11-20 (-2d) | 2027-11-24 → 2027-11-21 (-3d) | -188.02d → -186d |
| 6687 | **RHD4-02-002-L015-(IRR)-Air Valve Chamber** | 2027-07-05 → 2027-06-30 (-5d) | 2027-07-13 → 2027-07-08 (-5d) |  |
| RHD4CZ7L015IRR2102 | Excavation and Bedding for Valve Chamber for Irrigation Network - (RD-L-15)-Z7-L015-IRR | 2027-07-05 → 2027-06-30 (-5d) | 2027-07-06 → 2027-07-01 (-5d) | -87d → -83d |
| RHD4CZ7L015IRR2202 | PC works for Valve Chamber for Irrigation Network - (RD-L-15)-Z7-L015-IRR | 2027-07-07 → 2027-07-03 (-4d) | 2027-07-08 → 2027-07-04 (-4d) | -87d → -83d |
| RHD4CZ7L015IRR2302 | Installation for Valve Chamber for Irrigation Network - (RD-L-15)-Z7-L015-IRR | 2027-07-10 → 2027-07-05 (-5d) | 2027-07-11 → 2027-07-06 (-5d) | -87d → -83d |
| RHD4CZ7L015IRR2402 | Backfilling works for Valve Chamber for Irrigation Network - (RD-L-15)-Z7-L015-IRR | 2027-07-12 → 2027-07-07 (-5d) | 2027-07-13 → 2027-07-08 (-5d) | -87d → -83d |
| 6688 | **RHD4-02-002-L015-(IRR)-Air Valves** | 2027-07-12 → 2027-07-07 (-5d) | 2027-09-06 → 2027-09-01 (-5d) |  |
| RHD4CZ7L015IRR3103 | Installation for Air Valves for Irrigation Network - (RD-L-15)-Z7-L015-IRR | 2027-07-12 → 2027-07-07 (-5d) | 2027-07-13 → 2027-07-08 (-5d) | -87d → -83d |
| RHD4CZ7L015IRR3203 | Stem and Service box for Air Valves for Irrigation Network - (RD-L-15)-Z7-L015-IRR | 2027-09-04 → 2027-08-31 (-4d) | 2027-09-06 → 2027-09-01 (-5d) | -131.02d → -128d |
| 6707 | **RHD4-02-002-Z7-L015-Medium Voltage Network - MV** | 2027-02-21 → 2027-02-17 (-4d) | 2027-04-17 → 2027-04-12 (-5d) |  |
| 6708 | **RHD4-02-002-L015-(MV)-Medium Voltage cable trench** | 2027-02-21 → 2027-02-17 (-4d) | 2027-04-13 → 2027-04-08 (-5d) |  |
| RHD4CZ7L015MV1100 | Excavation for Medium Voltage Trench - (RD-L-15)-Z7-L015-MV | 2027-02-21 → 2027-02-17 (-4d) | 2027-03-14 → 2027-03-06 (-8d) | -94.02d → -94d |
| RHD4CZ7L015MV1200 | Trench Backfilling for Medium Voltage Network - (RD-L-15)-Z7-L015-MV | 2027-03-28 → 2027-03-24 (-4d) | 2027-04-13 → 2027-04-08 (-5d) | -94.02d → -94d |
| 6709 | **RHD4-02-002-L015-(MV)-Medium Voltage duct banks** | 2027-02-21 → 2027-02-17 (-4d) | 2027-03-08 → 2027-03-03 (-5d) |  |
| RHD4CZ7L015MV2100 | Excavation of Duct Banks for Medium Voltage Network - (RD-L-15)-Z7-L015-MV | 2027-02-21 → 2027-02-17 (-4d) | 2027-02-25 → 2027-02-20 (-5d) | -193.02d → -190d |
| RHD4CZ7L015MV2200 | Installation of Duct Banks for Medium Voltage Network - (RD-L-15)-Z7-L015-MV | 2027-02-25 → 2027-02-21 (-4d) | 2027-03-02 → 2027-02-25 (-5d) | -92.02d → -92d |
| RHD4CZ7L015MV2300 | Pouring of Duct Banks for Medium Voltage Network - (RD-L-15)-Z7-L015-MV | 2027-03-02 → 2027-02-27 (-3d) | 2027-03-06 → 2027-03-01 (-5d) | -92.02d → -92d |
| RHD4CZ7L015MV2400 | Backfilling of Duct Banks for Medium Voltage Network - (RD-L-15)-Z7-L015-MV | 2027-03-06 → 2027-03-02 (-4d) | 2027-03-08 → 2027-03-03 (-5d) | -92.02d → -92d |
| 6710 | **RHD4-02-002-L015-(MV)-Medium Voltage cables 3Cx 500 mm²** | 2027-03-14 → 2027-03-07 (-7d) | 2027-04-17 → 2027-04-12 (-5d) |  |
| RHD4CZ7L015MV3100 | Installation of Medium Voltage Cables 3Cx 500 mm² - (RD-L-15)-Z7-L015-MV | 2027-03-14 → 2027-03-07 (-7d) | 2027-03-25 → 2027-03-21 (-4d) | -94.02d → -94d |

| ID | Task | Start | Finish | Total float |
| --- | --- | --- | --- | --- |
| RHD4CZ7L015MV3200 | Joints Installation of Medium Voltage Cables 3Cx 500 mm² - (RD-L-15)-Z7-L015-MV | 2027-03-25 → 2027-03-22 (-3d) | 2027-03-28 → 2027-03-23 (-5d) | -94.02d → -94d |
| RHD4CZ7L015MV3300 | Testing of Medium Voltage Cables 3Cx 500 mm² - (RD-L-15)-Z7-L015-MV | 2027-04-13 → 2027-04-10 (-3d) | 2027-04-17 → 2027-04-12 (-5d) | -94.02d → -94d |
| 6714 | **RHD4-02-002-Z7-L015-Low Voltage Network - LV** | 2027-09-06 → 2027-09-02 (-4d) | 2027-11-27 → 2027-11-23 (-4d) |  |
| 4257 | **RHD4-02-002-L015-(LV)-Low Voltage Drawpit** | 2027-09-06 → 2027-09-02 (-4d) | 2027-09-11 → 2027-09-06 (-5d) |  |
| RHD4CZ7L015LV5100 | Excavation of Drawpit size 900x900x1000mm for Low Voltage Network - (RD-L-15)-Z7-L015-LV | 2027-09-06 → 2027-09-02 (-4d) | 2027-09-08 → 2027-09-04 (-4d) | -131.02d → -128d |
| RHD4CZ7L015LV5200 | Installation of Drawpit size 900x900x1000mm for Low Voltage Network - (RD-L-15)-Z7-L015-LV | 2027-09-08 → 2027-09-05 (-3d) | 2027-09-11 → 2027-09-06 (-5d) | -131.02d → -128d |
| 4258 | **RHD4-02-002-L015-(LV)-Low Voltage cables** | 2027-09-11 → 2027-09-07 (-4d) | 2027-11-27 → 2027-11-23 (-4d) |  |
| RHD4CZ7L015LV3100 | Excavation for Low Voltage Cables for Low Voltage Network - (RD-L-15)-Z7-L015-LV | 2027-09-11 → 2027-09-07 (-4d) | 2027-09-13 → 2027-09-08 (-5d) | -131.02d → -128d |
| RHD4CZ7L015LV3200 | Cable Laying of Low Voltage Cables for Low Voltage Network - (RD-L-15)-Z7-L015-LV | 2027-09-13 → 2027-09-09 (-4d) | 2027-09-15 → 2027-09-11 (-4d) | -131.02d → -128d |
| RHD4CZ7L015LV3300 | Warning tape and Backfill for Low Voltage Cables for Low Voltage Network - (RD-L-15)-Z7-L015-LV | 2027-09-15 → 2027-09-12 (-3d) | 2027-09-18 → 2027-09-13 (-5d) | -131.02d → -128d |
| RHD4CZ7L015LV3400 | Testing of Low Voltage Cables for Low Voltage Network - (RD-L-15)-Z7-L015-LV | 2027-11-24 → 2027-11-22 (-2d) | 2027-11-27 → 2027-11-23 (-4d) | -188.02d → -186d |
| 6720 | **RHD4-02-002-Z7-L015-Street Lighting Network - SL** | 2027-02-25 → 2027-02-21 (-4d) | 2028-01-19 → 2028-01-16 (-3d) |  |
| 6721 | **RHD4-02-002-L015-(SL)-Street Lighting duct banks** | 2027-02-25 → 2027-02-21 (-4d) | 2027-03-15 → 2027-03-07 (-8d) |  |
| RHD4CZ7L015SL2100 | Excavation of Duct Banks for Street Lighting Network - (RD-L-15)-Z7-L015-SL | 2027-02-25 → 2027-02-21 (-4d) | 2027-03-01 → 2027-02-24 (-5d) | -193.02d → -190d |
| RHD4CZ7L015SL2200 | Installation of Duct Banks for Street Lighting Network - (RD-L-15)-Z7-L015-SL | 2027-03-01 → 2027-02-25 (-4d) | 2027-03-06 → 2027-03-01 (-5d) | -162.02d → -159d |
| RHD4CZ7L015SL2300 | Pouring of Duct Banks for Street Lighting Network - (RD-L-15)-Z7-L015-SL | 2027-03-06 → 2027-03-02 (-4d) | 2027-03-13 → 2027-03-04 (-9d) | -162.02d → -159d |
| RHD4CZ7L015SL2400 | Backfilling of Duct Banks for Street Lighting Network - (RD-L-15)-Z7-L015-SL | 2027-03-13 → 2027-03-06 (-7d) | 2027-03-15 → 2027-03-07 (-8d) | -162.02d → -159d |
| 6722 | **RHD4-02-002-L015-(SL)-Street Lighting Drawpit** | 2027-11-27 → 2027-11-24 (-3d) | 2027-12-01 → 2027-11-28 (-3d) |  |
| RHD4CZ7L015SL5100 | Excavation of Drawpit size 600x600x900mm for Street Lighting Network - (RD-L-15)-Z7-L015-SL | 2027-11-27 → 2027-11-24 (-3d) | 2027-11-29 → 2027-11-25 (-4d) | -188.02d → -186d |
| RHD4CZ7L015SL5200 | Installation of Drawpit size 600x600x900mm for Street Lighting Network - (RD-L-15)-Z7-L015-SL | 2027-11-29 → 2027-11-27 (-2d) | 2027-12-01 → 2027-11-28 (-3d) | -188.02d → -186d |
| 6723 | **RHD4-02-002-L015-(SL)-Street Lighting cables** | 2027-12-01 → 2027-11-29 (-2d) | 2027-12-23 → 2027-12-20 (-3d) |  |
| RHD4CZ7L015SL3100 | Excavation for Street Lighting Cables for Street Lighting Network - (RD-L-15)-Z7-L015-SL | 2027-12-01 → 2027-11-29 (-2d) | 2027-12-08 → 2027-12-05 (-3d) | -188.02d → -186d |
| RHD4CZ7L015SL3200 | Cable Laying of Street Lighting Cables for Street Lighting Network - (RD-L-15)-Z7-L015-SL | 2027-12-08 → 2027-12-06 (-2d) | 2027-12-14 → 2027-12-11 (-3d) | -188.02d → -186d |
| RHD4CZ7L015SL3300 | Warning tape and Backfill for Street Lighting Cables for Street Lighting Network - (RD-L-15)-Z7-L015-SL | 2027-12-14 → 2027-12-12 (-2d) | 2027-12-20 → 2027-12-16 (-4d) | -188.02d → -186d |
| RHD4CZ7L015SL3400 | Testing of Street Lighting Cables for Street Lighting Network - (RD-L-15)-Z7-L015-SL | 2027-12-20 → 2027-12-18 (-2d) | 2027-12-23 → 2027-12-20 (-3d) | -188.02d → -186d |
| 6724 | **RHD4-02-002-L015-(SL)-Street Lighting Poles** | 2027-12-23 → 2027-12-21 (-2d) | 2028-01-19 → 2028-01-16 (-3d) |  |
| RHD4CZ7L015SL1100 | Excavation for RC Base for Lighting Poles for Street Lighting Network - (RD-L-15)-Z7-L015-SL | 2027-12-23 → 2027-12-21 (-2d) | 2027-12-28 → 2027-12-25 (-3d) | -188.02d → -186d |
| RHD4CZ7L015SL1200 | Installation for RC Base for Lighting Poles for Street Lighting Network - (RD-L-15)-Z7-L015-SL | 2027-12-28 → 2027-12-26 (-2d) | 2028-01-02 → 2027-12-29 (-4d) | -188.02d → -186d |
| RHD4CZ7L015SL1300 | Backfill for RC Base for Lighting Poles for Street Lighting Network - (RD-L-15)-Z7-L015-SL | 2028-01-02 → 2027-12-30 (-3d) | 2028-01-06 → 2028-01-03 (-3d) | -188.02d → -186d |
| RHD4CZ7L015SL1400 | Installation for Lighting Poles for Street Lighting Network - (RD-L-15)-Z7-L015-SL | 2028-01-06 → 2028-01-04 (-2d) | 2028-01-12 → 2028-01-09 (-3d) | -188.02d → -186d |
| RHD4CZ7L015SL1500 | Luminaire Installation for Lighting Poles for Street Lighting Network - (RD-L-15)-Z7-L015-SL | 2028-01-15 → 2028-01-12 (-3d) | 2028-01-19 → 2028-01-16 (-3d) | -188.02d → -186d |
| 6726 | **RHD4-02-002-L015-(SL)-Street Lighting Earthing System** | 2028-01-12 → 2028-01-10 (-2d) | 2028-01-15 → 2028-01-11 (-4d) |  |
| RHD4CZ7L015SL6100 | Installation of Earthing for Lighting Poles and Fedder Pillers for Street Lighting Network - (RD-L-15)-Z7-L015-SL | 2028-01-12 → 2028-01-10 (-2d) | 2028-01-15 → 2028-01-11 (-4d) | -188.02d → -186d |
| 6732 | **RHD4-02-002-Z7-L015-Telecommunications Network - TC** | 2027-03-01 → 2027-02-25 (-4d) | 2028-03-05 → 2028-03-01 (-4d) |  |
| 6733 | **RHD4-02-002-L015-(TC)-Telecommunications Ducts** | 2028-01-19 → 2028-01-17 (-2d) | 2028-03-05 → 2028-03-01 (-4d) |  |
| RHD4CZ7L015TC2100 | Excavation of HDPE Ducts for Telecom Network - (RD-L-15)-Z7-L015-TC | 2028-01-19 → 2028-01-17 (-2d) | 2028-01-31 → 2028-01-27 (-4d) | -177.02d → -175d |
| RHD4CZ7L015TC2200 | Installation of HDPE Ducts for Telecom Network - (RD-L-15)-Z7-L015-TC | 2028-01-31 → 2028-01-29 (-2d) | 2028-02-17 → 2028-02-14 (-3d) | -177.02d → -175d |
| RHD4CZ7L015TC2400 | Backfilling of HDPE Ducts for Telecom Network - (RD-L-15)-Z7-L015-TC | 2028-02-17 → 2028-02-15 (-2d) | 2028-03-05 → 2028-03-01 (-4d) | -177.02d → -175d |
| 6734 | **RHD4-02-002-L015-(TC)-Telecommunications Manholes** | 2028-01-31 → 2028-01-29 (-2d) | 2028-02-12 → 2028-02-08 (-4d) |  |
| RHD4CZ7L015TC5100 | Excavation for Manholes for Telecom Network - (RD-L-15)-Z7-L015-TC | 2028-01-31 → 2028-01-29 (-2d) | 2028-02-06 → 2028-02-02 (-4d) | -172.02d → -170d |
| RHD4CZ7L015TC5200 | Installation of Manholes for Telecom Network - (RD-L-15)-Z7-L015-TC | 2028-02-06 → 2028-02-03 (-3d) | 2028-02-12 → 2028-02-08 (-4d) | -172.02d → -170d |
| 6735 | **RHD4-02-002-L015-(TC)-Telecomminications Road Crossings** | 2027-03-01 → 2027-02-25 (-4d) | 2027-03-14 → 2027-03-06 (-8d) |  |
| RHD4CZ7L015TC3100 | Excavation for Road Crossings for Telecom Network - (RD-L-15)-Z7-L015-TC | 2027-03-01 → 2027-02-25 (-4d) | 2027-03-03 → 2027-02-27 (-4d) | -193.02d → -190d |
| RHD4CZ7L015TC3200 | Installation of Road Crossings for Telecom Network - (RD-L-15)-Z7-L015-TC | 2027-03-03 → 2027-02-28 (-3d) | 2027-03-06 → 2027-03-01 (-5d) | -163.02d → -160d |
| RHD4CZ7L015TC3300 | Pouring of Road Crossings for Telecom Network - (RD-L-15)-Z7-L015-TC | 2027-03-06 → 2027-03-02 (-4d) | 2027-03-08 → 2027-03-03 (-5d) | -163.02d → -160d |
| RHD4CZ7L015TC3400 | Backfilling of Road Crossings for Telecom Network - (RD-L-15)-Z7-L015-TC | 2027-03-08 → 2027-03-04 (-4d) | 2027-03-14 → 2027-03-06 (-8d) | -163.02d → -160d |
| 6736 | **RHD4-02-002-Z7-L015-Information and Communication Technologies - ICT** | 2027-03-03 → 2027-02-28 (-3d) | 2028-04-10 → 2028-04-06 (-4d) |  |
| 6737 | **RHD4-02-002-L015-(ICT)-Information and Communication Technologies Ducts** | 2028-03-05 → 2028-03-02 (-3d) | 2028-04-10 → 2028-04-06 (-4d) |  |
| RHD4CZ7L015ICT2100 | Excavation of HDPE Ducts for ICT Network - (RD-L-15)-Z7-L015-ICT | 2028-03-05 → 2028-03-02 (-3d) | 2028-03-15 → 2028-03-12 (-3d) | -177.02d → -175d |
| RHD4CZ7L015ICT2200 | Installation of HDPE Ducts for ICT Network - (RD-L-15)-Z7-L015-ICT | 2028-03-15 → 2028-03-13 (-2d) | 2028-03-30 → 2028-03-27 (-3d) | -177.02d → -175d |
| RHD4CZ7L015ICT2400 | Backfilling of HDPE Ducts for ICT Network - (RD-L-15)-Z7-L015-ICT | 2028-03-30 → 2028-03-28 (-2d) | 2028-04-10 → 2028-04-06 (-4d) | -177.02d → -175d |
| 6738 | **RHD4-02-002-L015-(ICT)-Information and Communication Technologies Manholes** | 2028-03-15 → 2028-03-13 (-2d) | 2028-03-22 → 2028-03-19 (-3d) |  |
| RHD4CZ7L015ICT5100 | Excavation for Manholes for ICT Network - (RD-L-15)-Z7-L015-ICT | 2028-03-15 → 2028-03-13 (-2d) | 2028-03-19 → 2028-03-15 (-4d) | -170.02d → -168d |
| RHD4CZ7L015ICT5200 | Installation of Manholes for ICT Network - (RD-L-15)-Z7-L015-ICT | 2028-03-19 → 2028-03-16 (-3d) | 2028-03-22 → 2028-03-19 (-3d) | -170.02d → -168d |
| 6739 | **RHD4-02-002-L015-(ICT)-Information and Communication Technologies Road Crossings** | 2027-03-03 → 2027-02-28 (-3d) | 2027-03-16 → 2027-03-08 (-8d) |  |
| RHD4CZ7L015ICT3100 | Excavation for Road Crossings for ICT Network - (RD-L-15)-Z7-L015-ICT | 2027-03-03 → 2027-02-28 (-3d) | 2027-03-06 → 2027-03-01 (-5d) | -193.02d → -190d |
| RHD4CZ7L015ICT3200 | Installation of Road Crossings for ICT Network - (RD-L-15)-Z7-L015-ICT | 2027-03-06 → 2027-03-02 (-4d) | 2027-03-08 → 2027-03-03 (-5d) | -193.02d → -190d |
| RHD4CZ7L015ICT3300 | Pouring of Road Crossings for ICT Network - (RD-L-15)-Z7-L015-ICT | 2027-03-08 → 2027-03-04 (-4d) | 2027-03-14 → 2027-03-06 (-8d) | -193.02d → -190d |
| RHD4CZ7L015ICT3400 | Backfilling of Road Crossings for ICT Network - (RD-L-15)-Z7-L015-ICT | 2027-03-14 → 2027-03-07 (-7d) | 2027-03-16 → 2027-03-08 (-8d) | -193.02d → -190d |
| 6740 | **RHD4-02-002-Z7-L015-Security Network - CCTV** | 2028-04-10 → 2028-04-08 (-2d) | 2028-05-23 → 2028-05-21 (-2d) |  |
| 499 | **RHD4-02-002-Z7-L015-(CCTV)-CCTV Poles** | 2028-04-16 → 2028-04-13 (-3d) | 2028-04-27 → 2028-04-25 (-2d) |  |
| RHD4CZ7L015CCTV1100 | Excavation for RC Base for CCTV Poles for Security Network - (RD-L-15)-Z7-L015-CCTV | 2028-04-16 → 2028-04-13 (-3d) | 2028-04-18 → 2028-04-15 (-3d) | -162.06d → -160.05d |
| RHD4CZ7L015CCTV1200 | Installation for RC Base for CCTV Poles for Security Network - (RD-L-15)-Z7-L015-CCTV | 2028-04-18 → 2028-04-16 (-2d) | 2028-04-20 → 2028-04-17 (-3d) | -162.06d → -160.05d |
| RHD4CZ7L015CCTV1300 | Backfill for RC Base for CCTV Poles for Security Network - (RD-L-15)-Z7-L015-CCTV | 2028-04-20 → 2028-04-18 (-2d) | 2028-04-23 → 2028-04-20 (-3d) | -162.06d → -160.05d |
| RHD4CZ7L015CCTV1400 | Installation for CCTV Poles for Security Network - (RD-L-15)-Z7-L015-CCTV | 2028-04-23 → 2028-04-20 (-3d) | 2028-04-25 → 2028-04-23 (-2d) | -162.06d → -160.05d |
| RHD4CZ7L015CCTV1500 | Protection post Installation for CCTV Poles for Security Network - (RD-L-15)-Z7-L015-CCTV | 2028-04-25 → 2028-04-23 (-2d) | 2028-04-27 → 2028-04-25 (-2d) | -158.06d → -156.04d |
| 501 | **RHD4-02-002-Z7-L015-(CCTV)-Power and Infrastructure** | 2028-04-25 → 2028-04-23 (-2d) | 2028-04-30 → 2028-04-27 (-3d) |  |
| RHD4CZ7L015CCTV4100 | Installation of Power outlet, UPS and midspan for PTZ Camerafor Cameras for Security Network - (RD-L-15)-Z7-L015-CCTV | 2028-04-25 → 2028-04-23 (-2d) | 2028-04-27 → 2028-04-25 (-2d) | -162.06d → -160.05d |
| RHD4CZ7L015CCTV4200 | Short Range Wireless PoP wireless Bridgefor CCTV Poles for Security Network - (RD-L-15)-Z7-L015-CCTV | 2028-04-27 → 2028-04-25 (-2d) | 2028-04-30 → 2028-04-27 (-3d) | -162.06d → -160.05d |
| 6741 | **RHD4-02-002-Z7-L015-(CCTV)-Civil Works** | 2028-04-10 → 2028-04-08 (-2d) | 2028-04-16 → 2028-04-12 (-4d) |  |

| ID | Task | Start | Finish | Complete | Total float |
| --- | --- | --- | --- | --- | --- |
| RHD4CZ7L015CCTV2100 | Civil Works for Security Network - (RD-L-15)-Z7-L015-CCTV | 2028-04-10 → 2028-04-08 (-2d) | 2028-04-16 → 2028-04-12 (-4d) |  | -177.02d → -175d |
| 500 | **RHD4-02-002-Z7-L015-(CCTV)-Camera** | 2028-04-30 → 2028-04-27 (-3d) | 2028-05-02 → 2028-04-30 (-2d) |  |  |
| RHD4CZ7L015CCTV3100 | Installation for Cameras for Security Network - (RD-L-15)-Z7-L015-CCTV | 2028-04-30 → 2028-04-27 (-3d) | 2028-05-02 → 2028-04-30 (-2d) |  | -162.06d → -160.05d |
| 503 | **RHD4-02-002-Z7-L015-(CCTV)-CCTV Panels and Components** | 2028-05-02 → 2028-04-30 (-2d) | 2028-05-23 → 2028-05-21 (-2d) |  |  |
| RHD4CZ7L015CCTV6100 | Installation for CCTV Panels for Security Network - (RD-L-15)-Z7-L015-CCTV | 2028-05-02 → 2028-04-30 (-2d) | 2028-05-23 → 2028-05-21 (-2d) |  | -162.06d → -160.05d |
| 6946 | **RHD4-02-002-Z7-A012** |  | 2028-06-04 → 2028-06-01 (-3d) |  |  |
| 7125 | **RHD4-02-002-Z7-A012-Road Works - RD** |  | 2028-06-04 → 2028-06-01 (-3d) |  |  |
| 7128 | **RHD4-02-002-A012-(RD)-Bituminous base course Two Layers, including (MC1)&(RC2)** | 2027-02-18 → 2026-11-10 (-100d) | 2027-09-16 → 2027-09-04 (-12d) |  |  |
| RHD4CZ7A012RD3100 | Supply, lay and Asphaltic base course including Prime Coat (MC1) for 1st Layer - (RD-A-1 /2)-Z7-A012-RD | 2027-02-18 → 2026-11-10 A (-100d) | 2027-02-24 → 2027-02-16 (-8d) | 0% → 40% | -176.02d → -171d |
| RHD4CZ7A012RD3200 | Supply, lay and Asphaltic base course including Tack Coat (RC2) for 2nd Layer - (RD-A-1 /2)-Z7-A012-RD | 2027-09-13 → 2027-08-31 (-13d) | 2027-09-16 → 2027-09-04 (-12d) |  | -83d → -72d |
| 7130 | **RHD4-02-002-A012-(RD)-Precast Concrete Curb** | 2027-09-18 → 2027-09-05 (-13d) | 2027-09-28 → 2027-09-14 (-14d) |  |  |
| RHD4CZ7A012RD5100 | Supply and installation Precast Concrete Kerb for Roads - (RD-A-1 /2)-Z7-A012-RD | 2027-09-18 → 2027-09-05 (-13d) | 2027-09-28 → 2027-09-14 (-14d) |  | -83d → -72d |
| 7133 | **RHD4-02-002-A012-(RD)-Traffic Signage** | 2028-05-08 → 2028-05-02 (-6d) | 2028-05-15 → 2028-05-11 (-4d) |  |  |
| RHD4CZ7A012RD8100 | Installation of Traffic Signage for Road Network - (RD-A-1 /2)-Z7-A012-RD | 2028-05-08 → 2028-05-02 (-6d) | 2028-05-15 → 2028-05-11 (-4d) |  | -152.02d → -150d |
| 7129 | **RHD4-02-002-A012-(RD)-Bituminous concrete wearing course including tack coat (RC2)** | 2028-05-25 → 2028-05-23 (-2d) | 2028-05-28 → 2028-05-25 (-3d) |  |  |
| RHD4CZ7A012RD4100 | Supply, lay and compaction Asphaltic wearing course including tack Coat (RC2)for Road Network - (RD-A-1 /2)-Z7-A012-RD | 2028-05-25 → 2028-05-23 (-2d) | 2028-05-28 → 2028-05-25 (-3d) |  | -162.06d → -160.05d |
| 7132 | **RHD4-02-002-A012-(RD)-Pavement Marking** | 2028-05-28 → 2028-05-25 (-3d) | 2028-06-04 → 2028-06-01 (-3d) |  |  |
| RHD4CZ7A012RD7100 | Pavement Markings for Road Network - (RD-A-1 /2)-Z7-A012-RD | 2028-05-28 → 2028-05-25 (-3d) | 2028-06-04 → 2028-06-01 (-3d) |  | -162.06d → -160.05d |
| 6950 | **RHD4-02-002-Z7-A012-Storm Network - ST** |  | 2027-04-27 → 2027-04-20 (-7d) |  |  |
| 2039 | **RHD4-02-002-A012-(ST)-GRP Pipes - 1000 mm diameter** |  | 2027-02-11 → 2027-02-07 (-4d) |  |  |
| RHD4CZ7A012ST1406 | Primary Test for GRP Pipe Line 1000 mm - (RD-A-1 /2)-Z7-A012-ST | 2027-02-09 → 2027-02-06 (-3d) | 2027-02-11 → 2027-02-07 (-4d) |  | -170.02d → -167d |
| 5254 | **RHD4-02-002-A012-(ST)-GRP Pipes - 900 mm diameter** |  | 2027-04-22 → 2027-04-18 (-4d) |  |  |
| RHD4CZ7A012ST1405 | Primary Test for GRP Pipe Line 900 mm - (RD-A-1 /2)-Z7-A012-ST | 2027-04-21 → 2027-04-17 (-4d) | 2027-04-22 → 2027-04-18 (-4d) |  | -65d → -61d |
| 6576 | **RHD4-02-002-L015-(ST)-GRP Pipes - 700 mm diameter** |  | 2027-04-22 → 2027-04-18 (-4d) |  |  |
| RHD4CZ7A012ST1403 | Primary Test for GRP Pipe Line 700 mm - (RD-A-1 /2)-Z7-A012-ST | 2027-04-21 → 2027-04-17 (-4d) | 2027-04-22 → 2027-04-18 (-4d) |  | -65d → -61d |
| 6590 | **RHD4-02-002-L015-(ST)-MH Works - 1500 mm diameter** |  | 2027-02-18 → 2027-02-11 (-7d) |  |  |
| RHD4CZ7A012ST3201 | Installation of Base for MH 1500 mm - (RD-A-1 /2)-Z7-A012-ST |  | 2027-02-11 → 2026-11-12 A (-91d) | 69% → 100% | -176.02d → none |
| RHD4CZ7A012ST3301 | MH Ring and C.Slab works and Backfilling works for MH 1500 mm - (RD-A-1 /2)-Z7-A012-ST | 2027-02-11 → 2027-02-06 (-5d) | 2027-02-14 → 2027-02-07 (-7d) |  | -176.02d → -171d |
| RHD4CZ7A012ST3401 | Steel Cover for MH 1500 mm - (RD-A-1 /2)-Z7-A012-ST | 2027-02-14 → 2027-02-08 (-6d) | 2027-02-16 → 2027-02-09 (-7d) |  | -176.02d → -171d |
| RHD4CZ7A012ST3501 | Finishing, Benching, Testing works for MH 1500 mm - (RD-A-1 /2)-Z7-A012-ST | 2027-02-16 → 2027-02-10 (-6d) | 2027-02-18 → 2027-02-11 (-7d) |  | -176.02d → -171d |
| 6024 | **RHD4-02-002-A012-(ST)-MH Works - 2000 mm diameter** |  | 2027-04-27 → 2027-04-20 (-7d) |  |  |
| RHD4CZ7A012ST3302 | MH Ring and C.Slab works and Backfilling works for MH 2000 mm - (RD-A-1 /2)-Z7-A012-ST |  | 2027-04-22 → 2026-11-12 A (-161d) | 75% → 100% | -69d → none |
| RHD4CZ7A012ST3402 | Steel Cover for MH 2000 mm - (RD-A-1 /2)-Z7-A012-ST | 2027-04-24 → 2027-04-17 (-7d) | 2027-04-25 → 2027-04-18 (-7d) |  | -69d → -63d |
| RHD4CZ7A012ST3502 | Finishing, Benching, Testing works for MH 2000 mm - (RD-A-1 /2)-Z7-A012-ST | 2027-04-26 → 2027-04-19 (-7d) | 2027-04-27 → 2027-04-20 (-7d) |  | -69d → -63d |
| 6010 | **RHD4-02-002-A012-(ST)-GRP Pipes - 800 mm diameter** |  | 2027-04-22 → 2027-04-18 (-4d) |  |  |
| RHD4CZ7A012ST1404 | Primary Test for GRP Pipe Line 800 mm - (RD-A-1 /2)-Z7-A012-ST | 2027-04-21 → 2027-04-17 (-4d) | 2027-04-22 → 2027-04-18 (-4d) |  | -65d → -61d |
| 6965 | **RHD4-02-002-A012-(ST)-UPVC Pipes - 300 mm diameter** |  | 2027-04-22 → 2027-04-18 (-4d) |  |  |
| RHD4CZ7A012ST2400 | Primary Test for UPVC Pipe Line 300 mm - (RD-A-1 /2)-Z7-A012-ST | 2027-04-21 → 2027-04-17 (-4d) | 2027-04-22 → 2027-04-18 (-4d) |  | -88d → -84d |
| 6974 | **RHD4-02-002-Z7-A012-Catch Basin - ST** |  | 2027-04-27 → 2027-04-22 (-5d) |  |  |
| 6975 | **RHD4-02-002-A012-(ST)-Single Catch Basin Works** |  | 2027-04-26 → 2027-04-21 (-5d) |  |  |
| RHD4CZ7A012ST7400 | Steel Cover for Single Catch Basin - (RD-A-1 /2)-Z7-A012-ST | 2027-04-21 → 2027-04-17 (-4d) | 2027-04-22 → 2027-04-18 (-4d) |  | -98d → -94d |
| RHD4CZ7A012ST7500 | Finishing and Insulation works for Single Catch Basin - (RD-A-1 /2)-Z7-A012-ST | 2027-04-24 → 2027-04-19 (-5d) | 2027-04-26 → 2027-04-21 (-5d) |  | -98d → -94d |
| 6976 | **RHD4-02-002-A012-(ST)-Double Catch Basin Works** |  | 2027-04-27 → 2027-04-22 (-5d) |  |  |
| RHD4CZ7A012ST8400 | Steel Cover for Double Catch Basin - (RD-A-1 /2)-Z7-A012-ST | 2027-04-24 → 2027-04-19 (-5d) | 2027-04-25 → 2027-04-20 (-5d) |  | -96d → -92d |
| RHD4CZ7A012ST8500 | Finishing and Insulation works for Double Catch Basin - (RD-A-1 /2)-Z7-A012-ST | 2027-04-26 → 2027-04-21 (-5d) | 2027-04-27 → 2027-04-22 (-5d) |  | -96d → -92d |
| 6810 | **RHD4-02-002-Z7-A012-Sewage Network - SW** |  | 2027-06-01 → 2027-05-27 (-5d) |  |  |
| 6433 | **RHD4-02-002-A012-(SW)-GRP Pipes - 300 mm diameter** |  | 2027-05-02 → 2027-04-27 (-5d) |  |  |
| RHD4CZ7A012SW1200 | Bedding works for GRP Pipe Line 300 mm - (RD-A-1 /2)-Z7-A012-SW |  | 2027-04-25 → 2027-04-20 (-5d) |  | -87d → -83d |
| RHD4CZ7A012SW1300 | Installing for GRP Pipe Line 300 mm - (RD-A-1 /2)-Z7-A012-SW |  | 2027-04-27 → 2027-04-22 (-5d) |  | -87d → -83d |
| RHD4CZ7A012SW1400 | Primary Test for GRP Pipe Line 300 mm - (RD-A-1 /2)-Z7-A012-SW | 2027-04-28 → 2027-04-24 (-4d) | 2027-04-29 → 2027-04-25 (-4d) |  | -87d → -83d |
| RHD4CZ7A012SW1500 | Backfilling and warning tape works for GRP Pipe Line 300 mm - (RD-A-1 /2)-Z7-A012-SW | 2027-05-01 → 2027-04-26 (-5d) | 2027-05-02 → 2027-04-27 (-5d) |  | -87d → -83d |
| 6442 | **RHD4-02-002-A012-(SW)-MH Works - 1200 mm diameter** |  | 2027-06-01 → 2027-05-27 (-5d) |  |  |
| RHD4CZ7A012SW3100 | Excavation and PC Blinding works for MH 1200 mm - (RD-A-1 /2)-Z7-A012-SW |  | 2027-04-29 → 2027-04-25 (-4d) |  | -88d → -84d |
| RHD4CZ7A012SW3200 | Installation of Base for MH 1200 mm - (RD-A-1 /2)-Z7-A012-SW |  | 2027-05-08 → 2027-05-03 (-5d) |  | -88d → -84d |
| RHD4CZ7A012SW3300 | MH Ring and C.Slab works and Backfilling works for MH 1200 mm - (RD-A-1 /2)-Z7-A012-SW | 2027-05-09 → 2027-05-04 (-5d) | 2027-05-20 → 2027-05-11 (-9d) |  | -88d → -84d |
| RHD4CZ7A012SW3400 | Steel Cover for MH 1200 mm - (RD-A-1 /2)-Z7-A012-SW | 2027-05-22 → 2027-05-12 (-10d) | 2027-05-24 → 2027-05-19 (-5d) |  | -88d → -84d |
| RHD4CZ7A012SW3500 | Finishing, Benching, Testing works for MH 1200 mm - (RD-A-1 /2)-Z7-A012-SW | 2027-05-25 → 2027-05-20 (-5d) | 2027-06-01 → 2027-05-27 (-5d) |  | -88d → -84d |
| 6434 | **RHD4-02-002-A012-(SW)-GRP Pipes - 400 mm diameter** |  | 2027-05-27 → 2027-05-23 (-4d) |  |  |
| RHD4CZ7A012SW1101 | Excavation works for GRP Pipe Line 400 mm - (RD-A-1 /2)-Z7-A012-SW |  | 2027-05-02 → 2027-04-27 (-5d) |  | -83d → -79d |
| RHD4CZ7A012SW1201 | Bedding works for GRP Pipe Line 400 mm - (RD-A-1 /2)-Z7-A012-SW |  | 2027-05-04 → 2027-04-29 (-5d) |  | -56d → -52d |
| RHD4CZ7A012SW1301 | Installing for GRP Pipe Line 400 mm - (RD-A-1 /2)-Z7-A012-SW |  | 2027-05-23 → 2027-05-13 (-10d) |  | -66d → -62d |
| RHD4CZ7A012SW1401 | Primary Test for GRP Pipe Line 400 mm - (RD-A-1 /2)-Z7-A012-SW | 2027-05-24 → 2027-05-19 (-5d) | 2027-05-25 → 2027-05-20 (-5d) |  | -66d → -62d |
| RHD4CZ7A012SW1501 | Backfilling and warning tape works for GRP Pipe Line 400 mm - (RD-A-1 /2)-Z7-A012-SW | 2027-05-26 → 2027-05-22 (-4d) | 2027-05-27 → 2027-05-23 (-4d) |  | -66d → -62d |
| 6438 | **RHD4-02-002-A012-(SW)-UPVC Pipes - 200 mm diameter** |  | 2027-05-04 → 2027-04-29 (-5d) |  |  |
| RHD4CZ7A012SW2400 | Primary Test for UPVC Pipe Line 200 mm - (RD-A-1 /2)-Z7-A012-SW | 2027-05-03 → 2027-04-28 (-5d) | 2027-05-04 → 2027-04-29 (-5d) |  | -83d → -79d |
| 7036 | **RHD4-02-002-Z7-A012-Potable Network - PT** | 2027-05-05 → 2026-10-17 (-200d) | 2027-06-12 → 2027-06-05 (-7d) |  |  |
| 7040 | **RHD4-02-002-A012-(PT)-HDPE Pipes - 400 mm diameter** | 2027-05-05 → 2026-10-17 (-200d) | 2027-05-31 → 2027-05-24 (-7d) |  |  |
| RHD4CZ7A012PT1103 | Excavation works for HDPE Pipline 400 mm - (RD-A-1 /2)-Z7-A012-PT | 2027-05-05 → 2026-10-17 A (-200d) | 2027-05-08 → 2027-05-03 (-5d) | 0% → 75% | -83d → -77d |
| RHD4CZ7A012PT1203 | Bedding works for HDPE Pipline 400 mm - (RD-A-1 /2)-Z7-A012-PT | 2027-05-09 → 2026-11-07 A (-183d) | 2027-05-11 → 2027-05-06 (-5d) | 0% → 15% | -83d → -77d |
| RHD4CZ7A012PT1303 | Installing for HDPE Pipline 400 mm - (RD-A-1 /2)-Z7-A012-PT | 2027-05-12 → 2026-11-08 A (-185d) | 2027-05-20 → 2027-05-11 (-9d) | 0% → 77% | -83d → -77d |

| ID | Task | Start | Finish | Complete | Total float |
| --- | --- | --- | --- | --- | --- |
| RHD4CZ7A012PT1503 | Backfilling and warning tape works for HDPE Pipline 400 mm - (RD-A-1 /2)-Z7-A012-PT | 2027-05-29 → 2026-11-09 A (-201d) | 2027-05-31 → 2027-05-24 (-7d) | 0% → 90% | -83d → -77d |
| RHD4CZ7A012PT1403 | Primary Test for HDPE Pipline 400 mm - (RD-A-1 /2)-Z7-A012-PT | 2027-05-26 → 2027-05-22 (-4d) | 2027-05-27 → 2027-05-23 (-4d) |  | -83d → -77d |
| 7043 | **RHD4-02-002-A012-(PT)-Butterfly Valve Chamber** | 2027-06-01 → 2027-05-25 (-7d) | 2027-06-09 → 2027-06-02 (-7d) |  |  |
| RHD4CZ7A012PT2100 | Excavation and Bedding for Butterfly Valve Chamber for Potable Water Network - (RD-A-1 /2)-Z7-A012-PT | 2027-06-01 → 2027-05-25 (-7d) | 2027-06-02 → 2027-05-26 (-7d) |  | -83d → -77d |
| RHD4CZ7A012PT2200 | PC works for Butterfly Valve Chamber for Potable Water Network - (RD-A-1 /2)-Z7-A012-PT | 2027-06-03 → 2027-05-27 (-7d) | 2027-06-05 → 2027-05-29 (-7d) |  | -83d → -77d |
| RHD4CZ7A012PT2300 | Installation for Butterfly Valve Chamber for Potable Water Network - (RD-A-1 /2)-Z7-A012-PT | 2027-06-06 → 2027-05-30 (-7d) | 2027-06-07 → 2027-05-31 (-7d) |  | -83d → -77d |
| RHD4CZ7A012PT2400 | Backfilling works for Butterfly Valve Chamber for Potable Water Network - (RD-A-1 /2)-Z7-A012-PT | 2027-06-08 → 2027-06-01 (-7d) | 2027-06-09 → 2027-06-02 (-7d) |  | -83d → -77d |
| 7044 | **RHD4-02-002-A012-(PT)-Butterfly Valves** | 2027-06-08 → 2027-06-01 (-7d) | 2027-06-12 → 2027-06-05 (-7d) |  |  |
| RHD4CZ7A012PT3101 | Installation for Butterfly Valves for Potable Water Network - (RD-A-1 /2)-Z7-A012-PT | 2027-06-08 → 2027-06-01 (-7d) | 2027-06-09 → 2027-06-02 (-7d) |  | -83d → -77d |
| RHD4CZ7A012PT3201 | Stem and Service box for Butterfly Valves for Potable Water Network - (RD-A-1 /2)-Z7-A012-PT | 2027-06-10 → 2027-06-03 (-7d) | 2027-06-12 → 2027-06-05 (-7d) |  | -83d → -77d |
| 7049 | **RHD4-02-002-A012-(PT)-Fire Hydrant** | 2027-06-01 → 2027-05-25 (-7d) | 2027-06-12 → 2027-06-05 (-7d) |  |  |
| RHD4CZ7A012PT4100 | Excavation and Bedding and Pipe Installation for Fire Hydrant - (RD-A-1 /2)-Z7-A012-PT | 2027-06-01 → 2027-05-25 (-7d) | 2027-06-02 → 2027-05-26 (-7d) |  | -83d → -77d |
| RHD4CZ7A012PT4200 | Valve Installation for Fire Hydrant - (RD-A-1 /2)-Z7-A012-PT | 2027-06-03 → 2027-05-27 (-7d) | 2027-06-05 → 2027-05-29 (-7d) |  | -83d → -77d |
| RHD4CZ7A012PT4300 | Stem for Fire Hydrant - (RD-A-1 /2)-Z7-A012-PT | 2027-06-06 → 2027-05-30 (-7d) | 2027-06-07 → 2027-05-31 (-7d) |  | -83d → -77d |
| RHD4CZ7A012PT4400 | Fire Installation for Fire Hydrant - (RD-A-1 /2)-Z7-A012-PT | 2027-06-08 → 2027-06-01 (-7d) | 2027-06-09 → 2027-06-02 (-7d) |  | -83d → -77d |
| RHD4CZ7A012PT4500 | Protection Barriers for Fire Hydrant - (RD-A-1 /2)-Z7-A012-PT | 2027-06-10 → 2027-06-03 (-7d) | 2027-06-12 → 2027-06-05 (-7d) |  | -83d → -77d |
| 7050 | **RHD4-02-002-A012-(PT)-Concrete Encasement** | 2027-05-12 → 2027-05-08 (-4d) | 2027-05-25 → 2027-05-20 (-5d) |  |  |
| RHD4CZ7A012PT5100 | Pipe Encasement for Potable Pipelines - (RD-A-1 /2)-Z7-A012-PT | 2027-05-12 → 2027-05-08 (-4d) | 2027-05-25 → 2027-05-20 (-5d) |  | -83d → -77d |
| 7051 | **RHD4-02-002-Z7-A012-Irrigation Network - IRR** | 2027-05-05 → 2027-05-01 (-4d) | 2027-06-19 → 2027-06-14 (-5d) |  |  |
| 7055 | **RHD4-02-002-A012-(IRR)-HDPE Pipes - 250 mm diameter** | 2027-05-05 → 2027-05-01 (-4d) | 2027-05-20 → 2027-05-11 (-9d) |  |  |
| RHD4CZ7A012IRR1103 | Excavation works for HDPE Pipline 250 mm - (RD-A-1 /2)-Z7-A012-IRR | 2027-05-05 → 2027-05-01 (-4d) | 2027-05-06 → 2027-05-02 (-4d) |  | -83d → -79d |
| RHD4CZ7A012IRR1203 | Bedding works for HDPE Pipline 250 mm - (RD-A-1 /2)-Z7-A012-IRR | 2027-05-08 → 2027-05-03 (-5d) | 2027-05-09 → 2027-05-04 (-5d) |  | -80d → -76d |
| RHD4CZ7A012IRR1303 | Installing for HDPE Pipline 250 mm - (RD-A-1 /2)-Z7-A012-IRR | 2027-05-10 → 2027-05-05 (-5d) | 2027-05-11 → 2027-05-06 (-5d) |  | -80d → -76d |
| RHD4CZ7A012IRR1403 | Primary Test for HDPE Pipline 250 mm - (RD-A-1 /2)-Z7-A012-IRR | 2027-05-12 → 2027-05-08 (-4d) | 2027-05-13 → 2027-05-09 (-4d) |  | -80d → -76d |
| RHD4CZ7A012IRR1503 | Backfilling and warning tape works for HDPE Pipline 250 mm - (RD-A-1 /2)-Z7-A012-IRR | 2027-05-19 → 2027-05-10 (-9d) | 2027-05-20 → 2027-05-11 (-9d) |  | -80d → -76d |
| 6115 | **RHD4-02-002-A012-(IRR)-Gate Valves (Direct Buried)** | 2027-05-20 → 2027-05-11 (-9d) | 2027-05-24 → 2027-05-19 (-5d) |  |  |
| RHD4CZ7A012IRR3100 | Installation for Direct Buried Gate Valves - (RD-A-1 /2)-Z7-A012-IRR | 2027-05-20 → 2027-05-11 (-9d) | 2027-05-22 → 2027-05-12 (-10d) |  | -79d → -75d |
| RHD4CZ7A012IRR3200 | Stem and Service box for Direct Buried Gate Valves - (RD-A-1 /2)-Z7-A012-IRR | 2027-05-23 → 2027-05-13 (-10d) | 2027-05-24 → 2027-05-19 (-5d) |  | -68d → -64d |
| 8762 | **RHD4-02-002-A012-(IRR)-HDPE Pipes - 500 mm diameter** | 2027-05-08 → 2027-05-03 (-5d) | 2027-05-27 → 2027-05-23 (-4d) |  |  |
| RHD4CZ7A012IRR1107 | Excavation works for HDPE Pipline 500 mm - (RD-A-1 /2)-Z7-A012-IRR | 2027-05-08 → 2027-05-03 (-5d) | 2027-05-10 → 2027-05-05 (-5d) |  | -83d → -79d |
| RHD4CZ7A012IRR1207 | Bedding works for HDPE Pipline 500 mm - (RD-A-1 /2)-Z7-A012-IRR | 2027-05-11 → 2027-05-06 (-5d) | 2027-05-13 → 2027-05-09 (-4d) |  | -68d → -64d |
| RHD4CZ7A012IRR1307 | Installing for HDPE Pipline 500 mm - (RD-A-1 /2)-Z7-A012-IRR | 2027-05-19 → 2027-05-10 (-9d) | 2027-05-22 → 2027-05-12 (-10d) |  | -68d → -64d |
| RHD4CZ7A012IRR1407 | Primary Test for HDPE Pipline 500 mm - (RD-A-1 /2)-Z7-A012-IRR | 2027-05-23 → 2027-05-13 (-10d) | 2027-05-24 → 2027-05-19 (-5d) |  | -68d → -64d |
| RHD4CZ7A012IRR1507 | Backfilling and warning tape works for HDPE Pipline 500 mm - (RD-A-1 /2)-Z7-A012-IRR | 2027-05-25 → 2027-05-20 (-5d) | 2027-05-27 → 2027-05-23 (-4d) |  | -68d → -64d |
| 6111 | **RHD4-02-002-A012-(IRR)-HDPE Pipes - 315 mm diameter** | 2027-05-11 → 2027-05-06 (-5d) | 2027-05-26 → 2027-05-22 (-4d) |  |  |
| RHD4CZ7A012IRR1104 | Excavation works for HDPE Pipline 315 mm - (RD-A-1 /2)-Z7-A012-IRR | 2027-05-11 → 2027-05-06 (-5d) | 2027-05-12 → 2027-05-08 (-4d) |  | -83d → -79d |
| RHD4CZ7A012IRR1204 | Bedding works for HDPE Pipline 315 mm - (RD-A-1 /2)-Z7-A012-IRR | 2027-05-13 → 2027-05-09 (-4d) | 2027-05-19 → 2027-05-10 (-9d) |  | -83d → -79d |
| RHD4CZ7A012IRR1304 | Installing for HDPE Pipline 315 mm - (RD-A-1 /2)-Z7-A012-IRR | 2027-05-20 → 2027-05-11 (-9d) | 2027-05-22 → 2027-05-12 (-10d) |  | -83d → -79d |
| RHD4CZ7A012IRR1404 | Primary Test for HDPE Pipline 315 mm - (RD-A-1 /2)-Z7-A012-IRR | 2027-05-23 → 2027-05-13 (-10d) | 2027-05-24 → 2027-05-19 (-5d) |  | -83d → -79d |
| RHD4CZ7A012IRR1504 | Backfilling and warning tape works for HDPE Pipline 315 mm - (RD-A-1 /2)-Z7-A012-IRR | 2027-05-25 → 2027-05-20 (-5d) | 2027-05-26 → 2027-05-22 (-4d) |  | -83d → -79d |
| 6116 | **RHD4-02-002-A012-(IRR)-Butterfly Valve Chamber** | 2027-05-27 → 2027-05-23 (-4d) | 2027-06-05 → 2027-05-31 (-5d) |  |  |
| RHD4CZ7A012IRR2100 | Excavation and Bedding for Butterfly Valve Chamber for Irrigation Network - (RD-A-1 /2)-Z7-A012-IRR | 2027-05-27 → 2027-05-23 (-4d) | 2027-05-29 → 2027-05-24 (-5d) |  | -83d → -79d |
| RHD4CZ7A012IRR2200 | PC works for Butterfly Valve Chamber for Irrigation Network - (RD-A-1 /2)-Z7-A012-IRR | 2027-05-30 → 2027-05-25 (-5d) | 2027-05-31 → 2027-05-26 (-5d) |  | -83d → -79d |
| RHD4CZ7A012IRR2300 | Installation for Butterfly Valve Chamber for Irrigation Network - (RD-A-1 /2)-Z7-A012-IRR | 2027-06-01 → 2027-05-27 (-5d) | 2027-06-02 → 2027-05-29 (-4d) |  | -83d → -79d |
| RHD4CZ7A012IRR2400 | Backfilling works for Butterfly Valve Chamber for Irrigation Network - (RD-A-1 /2)-Z7-A012-IRR | 2027-06-03 → 2027-05-30 (-4d) | 2027-06-05 → 2027-05-31 (-5d) |  | -75d → -71d |
| 6117 | **RHD4-02-002-A012-(IRR)-Butterfly Valves** | 2027-06-03 → 2027-05-30 (-4d) | 2027-06-07 → 2027-06-02 (-5d) |  |  |
| RHD4CZ7A012IRR3101 | Installation for Butterfly Valves for Irrigation Network - (RD-A-1 /2)-Z7-A012-IRR | 2027-06-03 → 2027-05-30 (-4d) | 2027-06-05 → 2027-05-31 (-5d) |  | -83d → -79d |
| RHD4CZ7A012IRR3201 | Stem and Service box for Butterfly Valves for Irrigation Network - (RD-A-1 /2)-Z7-A012-IRR | 2027-06-06 → 2027-06-01 (-5d) | 2027-06-07 → 2027-06-02 (-5d) |  | -75d → -71d |
| 6685 | **RHD4-02-002-A012-(IRR)-Wash out Chamber** | 2027-06-06 → 2027-06-01 (-5d) | 2027-06-14 → 2027-06-09 (-5d) |  |  |
| RHD4CZ7A012IRR2101 | Excavation and Bedding for Wash out Chamber for Irrigation Network - (RD-A-1 /2)-Z7-A012-IRR | 2027-06-06 → 2027-06-01 (-5d) | 2027-06-07 → 2027-06-02 (-5d) |  | -83d → -79d |
| RHD4CZ7A012IRR2201 | PC works for Wash out Chamber for Irrigation Network - (RD-A-1 /2)-Z7-A012-IRR | 2027-06-08 → 2027-06-03 (-5d) | 2027-06-09 → 2027-06-05 (-4d) |  | -83d → -79d |
| RHD4CZ7A012IRR2301 | Installation for Wash out Chamber for Irrigation Network - (RD-A-1 /2)-Z7-A012-IRR | 2027-06-10 → 2027-06-06 (-4d) | 2027-06-12 → 2027-06-07 (-5d) |  | -83d → -79d |
| RHD4CZ7A012IRR2401 | Backfilling works for Wash out Chamber for Irrigation Network - (RD-A-1 /2)-Z7-A012-IRR | 2027-06-13 → 2027-06-08 (-5d) | 2027-06-14 → 2027-06-09 (-5d) |  | -81d → -77d |
| 6686 | **RHD4-02-002-A012-(IRR)-Wash out Valves** | 2027-06-13 → 2027-06-08 (-5d) | 2027-06-16 → 2027-06-12 (-4d) |  |  |
| RHD4CZ7A012IRR3102 | Installation for Wash out Valve for Irrigation Network - (RD-A-1 /2)-Z7-A012-IRR | 2027-06-13 → 2027-06-08 (-5d) | 2027-06-14 → 2027-06-09 (-5d) |  | -83d → -79d |
| RHD4CZ7A012IRR3202 | Stem and Service box for Wash out Valve for Irrigation Network - (RD-A-1 /2)-Z7-A012-IRR | 2027-06-15 → 2027-06-10 (-5d) | 2027-06-16 → 2027-06-12 (-4d) |  | -81d → -77d |
| 1771 | **RHD4-02-002-A012-(IRR)-Concrete Encasement** | 2027-06-15 → 2027-06-10 (-5d) | 2027-06-19 → 2027-06-14 (-5d) |  |  |
| RHD4CZ7A012IRR5100 | Pipe Encasement for Irrigation Pipelines - (RD-A-1 /2)-Z7-A012-IRR | 2027-06-15 → 2027-06-10 (-5d) | 2027-06-19 → 2027-06-14 (-5d) |  | -83d → -79d |
| 7085 | **RHD4-02-002-Z7-A012-Medium Voltage Network - MV** |  | 2027-05-31 → 2027-05-13 (-18d) |  |  |
| 7088 | **RHD4-02-002-A012-(MV)-Medium Voltage cables 3Cx 500 mm²** | 2027-04-13 → 2027-03-31 (-13d) | 2027-05-08 → 2027-04-25 (-13d) |  |  |
| RHD4CZ7A012MV3100 | Installation of Medium Voltage Cables 3Cx 500 mm² - (RD-A-1 /2)-Z7-A012-MV | 2027-04-13 → 2027-03-31 (-13d) | 2027-04-22 → 2027-04-10 (-12d) |  | -83d → -72d |
| RHD4CZ7A012MV3200 | Joints Installation of Medium Voltage Cables 3Cx 500 mm² - (RD-A-1 /2)-Z7-A012-MV | 2027-04-24 → 2027-04-11 (-13d) | 2027-04-27 → 2027-04-14 (-13d) |  | -83d → -72d |
| RHD4CZ7A012MV3300 | Testing of Medium Voltage Cables 3Cx 500 mm² - (RD-A-1 /2)-Z7-A012-MV | 2027-04-28 → 2027-04-15 (-13d) | 2027-05-08 → 2027-04-25 (-13d) |  | -83d → -72d |
| 1793 | **RHD4-02-002-A012-(MV)-Medium Voltage cables 3Cx 50 mm²** | 2027-05-09 → 2027-04-26 (-13d) | 2027-05-10 → 2027-04-27 (-13d) |  |  |
| RHD4CZ7A012MV3401 | Termination of Medium Voltage Cables 3Cx 50 mm² - (RD-A-1 /2)-Z7-A012-MV | 2027-05-09 → 2027-04-26 (-13d) | 2027-05-10 → 2027-04-27 (-13d) |  | -83d → -72d |
| 1794 | **RHD4-02-002-A012-(MV)-Normally open Point (Outdoor Type)** | 2027-05-11 → 2027-04-28 (-13d) | 2027-05-19 → 2027-05-02 (-17d) |  |  |
| RHD4CZ7A012MV4100 | Installation for Normally open Point - (RD-A-1 /2)-Z7-A012-MV | 2027-05-11 → 2027-04-28 (-13d) | 2027-05-12 → 2027-04-29 (-13d) |  | -83d → -72d |
| RHD4CZ7A012MV4200 | Termination for Normally open Point - (RD-A-1 /2)-Z7-A012-MV | 2027-05-13 → 2027-05-01 (-12d) | 2027-05-19 → 2027-05-02 (-17d) |  | -83d → -72d |
| 7086 | **RHD4-02-002-A012-(MV)-Medium Voltage cable trench** | 2027-04-01 → 2027-03-20 (-12d) | 2027-05-31 → 2027-05-13 (-18d) |  |  |
| RHD4CZ7A012MV1100 | Excavation for Medium Voltage Trench - (RD-A-1 /2)-Z7-A012-MV | 2027-04-01 → 2027-03-20 (-12d) | 2027-04-12 → 2027-03-30 (-13d) |  | -83d → -72d |

| ID | Task | Start | Finish | Complete | Total float |
| --- | --- | --- | --- | --- | --- |
| RHD4CZ7A012MV1200 | Trench Backfilling for Medium Voltage Network - (RD-A-1 /2)-Z7-A012-MV | 2027-05-20 → 2027-05-03 (-17d) | 2027-05-31 → 2027-05-13 (-18d) |  | -83d → -72d |
| 7092 | **RHD4-02-002-Z7-A012-Low Voltage Network - LV** |  | 2027-06-19 → 2027-06-06 (-13d) |  |  |
| 7093 | **RHD4-02-002-A012-(LV)-Low Voltage duct banks** |  | 2027-03-25 → 2027-03-18 (-7d) |  |  |
| RHD4CZ7A012LV2100 | Excavation of Duct Banks for Low Voltage Network - (RD-A-1 /2)-Z7-A012-LV |  | 2027-03-02 → 2027-02-23 (-7d) |  | -123.02d → -116d |
| RHD4CZ7A012LV2200 | Installation of Duct Banks for Low Voltage Network - (RD-A-1 /2)-Z7-A012-LV |  | 2027-03-15 → 2027-03-04 (-11d) |  | -123.02d → -116d |
| RHD4CZ7A012LV2300 | Pouring of Duct Banks for Low Voltage Network - (RD-A-1 /2)-Z7-A012-LV |  | 2027-03-21 → 2027-03-14 (-7d) |  | -123.02d → -116d |
| RHD4CZ7A012LV2400 | Backfilling of Duct Banks for Low Voltage Network - (RD-A-1 /2)-Z7-A012-LV |  | 2027-03-25 → 2027-03-18 (-7d) |  | -123.02d → -116d |
| 7094 | **RHD4-02-002-A012-(LV)-Low Voltage Drawpit** | 2027-06-01 → 2027-05-19 (-13d) | 2027-06-05 → 2027-05-23 (-13d) |  |  |
| RHD4CZ7A012LV5100 | Excavation of Drawpit size 900x900x1000mm for Low Voltage Network - (RD-A-1 /2)-Z7-A012-LV | 2027-06-01 → 2027-05-19 (-13d) | 2027-06-02 → 2027-05-20 (-13d) |  | -83d → -72d |
| RHD4CZ7A012LV5200 | Installation of Drawpit size 900x900x1000mm for Low Voltage Network - (RD-A-1 /2)-Z7-A012-LV | 2027-06-03 → 2027-05-22 (-12d) | 2027-06-05 → 2027-05-23 (-13d) |  | -83d → -72d |
| 7095 | **RHD4-02-002-A012-(LV)-Low Voltage cables** | 2027-06-06 → 2027-05-24 (-13d) | 2027-06-19 → 2027-06-06 (-13d) |  |  |
| RHD4CZ7A012LV3100 | Excavation for Low Voltage Cables for Low Voltage Network - (RD-A-1 /2)-Z7-A012-LV | 2027-06-06 → 2027-05-24 (-13d) | 2027-06-09 → 2027-05-27 (-13d) |  | -83d → -72d |
| RHD4CZ7A012LV3200 | Cable Laying of Low Voltage Cables for Low Voltage Network - (RD-A-1 /2)-Z7-A012-LV | 2027-06-10 → 2027-05-29 (-12d) | 2027-06-13 → 2027-05-31 (-13d) |  | -83d → -72d |
| RHD4CZ7A012LV3300 | Warning tape and Backfill for Low Voltage Cables for Low Voltage Network - (RD-A-1 /2)-Z7-A012-LV | 2027-06-14 → 2027-06-01 (-13d) | 2027-06-16 → 2027-06-03 (-13d) |  | -83d → -72d |
| RHD4CZ7A012LV3400 | Testing of Low Voltage Cables for Low Voltage Network - (RD-A-1 /2)-Z7-A012-LV | 2027-06-17 → 2027-06-05 (-12d) | 2027-06-19 → 2027-06-06 (-13d) |  | -83d → -72d |
| 7098 | **RHD4-02-002-Z7-A012-Street Lighting Network - SL** | 2027-06-20 → 2027-06-07 (-13d) | 2027-07-14 → 2027-07-01 (-13d) |  |  |
| 7100 | **RHD4-02-002-A012-(SL)-Street Lighting Drawpit** | 2027-06-20 → 2027-06-07 (-13d) | 2027-06-23 → 2027-06-10 (-13d) |  |  |
| RHD4CZ7A012SL5100 | Excavation of Drawpit size 600x600x900mm for Street Lighting Network - (RD-A-1 /2)-Z7-A012-SL | 2027-06-20 → 2027-06-07 (-13d) | 2027-06-21 → 2027-06-08 (-13d) |  | -83d → -72d |
| RHD4CZ7A012SL5200 | Installation of Drawpit size 600x600x900mm for Street Lighting Network - (RD-A-1 /2)-Z7-A012-SL | 2027-06-22 → 2027-06-09 (-13d) | 2027-06-23 → 2027-06-10 (-13d) |  | -83d → -72d |
| 7101 | **RHD4-02-002-A012-(SL)-Street Lighting cables** | 2027-06-24 → 2027-06-12 (-12d) | 2027-07-03 → 2027-06-20 (-13d) |  |  |
| RHD4CZ7A012SL3100 | Excavation for Street Lighting Cables for Street Lighting Network - (RD-A-1 /2)-Z7-A012-SL | 2027-06-24 → 2027-06-12 (-12d) | 2027-06-26 → 2027-06-13 (-13d) |  | -83d → -72d |
| RHD4CZ7A012SL3200 | Cable Laying of Street Lighting Cables for Street Lighting Network - (RD-A-1 /2)-Z7-A012-SL | 2027-06-27 → 2027-06-14 (-13d) | 2027-06-28 → 2027-06-15 (-13d) |  | -83d → -72d |
| RHD4CZ7A012SL3300 | Warning tape and Backfill for Street Lighting Cables for Street Lighting Network - (RD-A-1 /2)-Z7-A012-SL | 2027-06-29 → 2027-06-16 (-13d) | 2027-06-30 → 2027-06-17 (-13d) |  | -83d → -72d |
| RHD4CZ7A012SL3400 | Testing of Street Lighting Cables for Street Lighting Network - (RD-A-1 /2)-Z7-A012-SL | 2027-07-01 → 2027-06-19 (-12d) | 2027-07-03 → 2027-06-20 (-13d) |  | -83d → -72d |
| 7102 | **RHD4-02-002-A012-(SL)-Street Lighting Poles** | 2027-07-04 → 2027-06-21 (-13d) | 2027-07-14 → 2027-07-01 (-13d) |  |  |
| RHD4CZ7A012SL1100 | Excavation for RC Base for Lighting Poles for Street Lighting Network - (RD-A-1 /2)-Z7-A012-SL | 2027-07-04 → 2027-06-21 (-13d) | 2027-07-05 → 2027-06-22 (-13d) |  | -83d → -72d |
| RHD4CZ7A012SL1200 | Installation for RC Base for Lighting Poles for Street Lighting Network - (RD-A-1 /2)-Z7-A012-SL | 2027-07-06 → 2027-06-23 (-13d) | 2027-07-07 → 2027-06-24 (-13d) |  | -83d → -72d |
| RHD4CZ7A012SL1300 | Backfill for RC Base for Lighting Poles for Street Lighting Network - (RD-A-1 /2)-Z7-A012-SL | 2027-07-08 → 2027-06-26 (-12d) | 2027-07-10 → 2027-06-27 (-13d) |  | -83d → -72d |
| RHD4CZ7A012SL1400 | Installation for Lighting Poles for Street Lighting Network - (RD-A-1 /2)-Z7-A012-SL | 2027-07-11 → 2027-06-28 (-13d) | 2027-07-12 → 2027-06-29 (-13d) |  | -83d → -72d |
| RHD4CZ7A012SL1500 | Luminaire Installation for Lighting Poles for Street Lighting Network - (RD-A-1 /2)-Z7-A012-SL | 2027-07-13 → 2027-06-30 (-13d) | 2027-07-14 → 2027-07-01 (-13d) |  | -83d → -72d |
| 7110 | **RHD4-02-002-Z7-A012-Telecommunications Network - TC** |  | 2027-07-31 → 2027-07-18 (-13d) |  |  |
| 7111 | **RHD4-02-002-A012-(TC)-Telecommunications Ducts** | 2027-07-15 → 2027-07-03 (-12d) | 2027-07-31 → 2027-07-18 (-13d) |  |  |
| RHD4CZ7A012TC2100 | Excavation of HDPE Ducts for Telecom Network - (RD-A-1 /2)-Z7-A012-TC | 2027-07-15 → 2027-07-03 (-12d) | 2027-07-19 → 2027-07-06 (-13d) |  | -83d → -72d |
| RHD4CZ7A012TC2200 | Installation of HDPE Ducts for Telecom Network - (RD-A-1 /2)-Z7-A012-TC | 2027-07-20 → 2027-07-07 (-13d) | 2027-07-26 → 2027-07-13 (-13d) |  | -83d → -72d |
| RHD4CZ7A012TC2400 | Backfilling of HDPE Ducts for Telecom Network - (RD-A-1 /2)-Z7-A012-TC | 2027-07-27 → 2027-07-14 (-13d) | 2027-07-31 → 2027-07-18 (-13d) |  | -83d → -72d |
| 7112 | **RHD4-02-002-A012-(TC)-Telecommunications Manholes** | 2027-07-20 → 2027-07-07 (-13d) | 2027-07-26 → 2027-07-13 (-13d) |  |  |
| RHD4CZ7A012TC5100 | Excavation for Manholes for Telecom Network - (RD-A-1 /2)-Z7-A012-TC | 2027-07-20 → 2027-07-07 (-13d) | 2027-07-22 → 2027-07-10 (-12d) |  | -83d → -72d |
| RHD4CZ7A012TC5200 | Installation of Manholes for Telecom Network - (RD-A-1 /2)-Z7-A012-TC | 2027-07-24 → 2027-07-11 (-13d) | 2027-07-26 → 2027-07-13 (-13d) |  | -83d → -72d |
| 7114 | **RHD4-02-002-Z7-A012-Information and Communication Technologies - ICT** |  | 2027-09-12 → 2027-08-30 (-13d) |  |  |
| 7115 | **RHD4-02-002-A012-(ICT)-Information and Communication Technologies Ducts** | 2027-08-01 → 2027-07-19 (-13d) | 2027-09-05 → 2027-08-23 (-13d) |  |  |
| RHD4CZ7A012ICT2100 | Excavation of HDPE Ducts for ICT Network - (RD-A-1 /2)-Z7-A012-ICT | 2027-08-01 → 2027-07-19 (-13d) | 2027-08-10 → 2027-07-28 (-13d) |  | -83d → -72d |
| RHD4CZ7A012ICT2200 | Installation of HDPE Ducts for ICT Network - (RD-A-1 /2)-Z7-A012-ICT | 2027-08-11 → 2027-07-29 (-13d) | 2027-08-25 → 2027-08-12 (-13d) |  | -83d → -72d |
| RHD4CZ7A012ICT2400 | Backfilling of HDPE Ducts for ICT Network - (RD-A-1 /2)-Z7-A012-ICT | 2027-08-26 → 2027-08-14 (-12d) | 2027-09-05 → 2027-08-23 (-13d) |  | -83d → -72d |
| 7116 | **RHD4-02-002-A012-(ICT)-Information and Communication Technologies Manholes** | 2027-09-06 → 2027-08-24 (-13d) | 2027-09-12 → 2027-08-30 (-13d) |  |  |
| RHD4CZ7A012ICT5100 | Excavation for Manholes for ICT Network - (RD-A-1 /2)-Z7-A012-ICT | 2027-09-06 → 2027-08-24 (-13d) | 2027-09-08 → 2027-08-26 (-13d) |  | -83d → -72d |
| RHD4CZ7A012ICT5200 | Installation of Manholes for ICT Network - (RD-A-1 /2)-Z7-A012-ICT | 2027-09-09 → 2027-08-28 (-12d) | 2027-09-12 → 2027-08-30 (-13d) |  | -83d → -72d |
| 6001 | **RHD4-02-002-Z7-C02** |  | 2028-06-07 → 2028-06-05 (-2d) |  |  |
| 6180 | **RHD4-02-002-Z7-C02-Road Works - RD** | 2027-03-03 → 2027-02-28 (-3d) | 2028-06-07 → 2028-06-05 (-2d) |  |  |
| 6181 | **RHD4-02-002-C02-(RD)-Subgrade** | 2027-03-03 → 2027-02-28 (-3d) | 2027-03-17 → 2027-03-13 (-4d) |  |  |
| RHD4CZ7C02RD1100 | Supply, lay and compaction subgrade compacted thickness 300 mm for Roads - (RD-C-2)-Z7-C02-RD | 2027-03-03 → 2027-02-28 (-3d) | 2027-03-17 → 2027-03-13 (-4d) |  | -197.02d → -194d |
| 6182 | **RHD4-02-002-C02-(RD)-Aggregate Base Course** | 2027-03-17 → 2027-03-14 (-3d) | 2027-03-24 → 2027-03-20 (-4d) |  |  |
| RHD4CZ7C02RD2100 | Supply, lay and compaction Aggregate base course compacted thickness 300 mmfor Roads - (RD-C-2)-Z7-C02-RD | 2027-03-17 → 2027-03-14 (-3d) | 2027-03-24 → 2027-03-20 (-4d) |  | -197.02d → -194d |
| 6183 | **RHD4-02-002-C02-(RD)-Bituminous base course Two Layers, including (MC1)&(RC2)** | 2027-03-24 → 2027-03-21 (-3d) | 2028-04-09 → 2028-04-12 (+3d) |  |  |
| RHD4CZ7C02RD3100 | Supply, lay and Asphaltic base course including Prime Coat (MC1) for 1st Layer - (RD-C-2)-Z7-C02-RD | 2027-03-24 → 2027-03-21 (-3d) | 2027-03-28 → 2027-03-23 (-5d) |  | -197.02d → -194d |
| RHD4CZ7C02RD3200 | Supply, lay and Asphaltic base course including Tack Coat (RC2) for 2nd Layer - (RD-C-2)-Z7-C02-RD | 2028-04-06 → 2028-04-10 (+4d) | 2028-04-09 → 2028-04-12 (+3d) |  | -131d → -134d |
| 6185 | **RHD4-02-002-C02-(RD)-Precast Concrete Curb** | 2028-04-10 → 2028-04-13 (+3d) | 2028-04-16 → 2028-04-19 (+3d) |  |  |
| RHD4CZ7C02RD5100 | Supply and installation Precast Concrete Kerb for Roads - (RD-C-2)-Z7-C02-RD | 2028-04-10 → 2028-04-13 (+3d) | 2028-04-16 → 2028-04-19 (+3d) |  | -131d → -134d |
| 6188 | **RHD4-02-002-C02-(RD)-Traffic Signage** | 2028-05-15 → 2028-05-13 (-2d) | 2028-05-22 → 2028-05-18 (-4d) |  |  |
| RHD4CZ7C02RD8100 | Installation of Traffic Signage for Road Network - (RD-C-2)-Z7-C02-RD | 2028-05-15 → 2028-05-13 (-2d) | 2028-05-22 → 2028-05-18 (-4d) |  | -152.02d → -150d |
| 6184 | **RHD4-02-002-C02-(RD)-Bituminous concrete wearing course including tack coat (RC2)** | 2028-05-28 → 2028-05-25 (-3d) | 2028-05-30 → 2028-05-28 (-2d) |  |  |
| RHD4CZ7C02RD4100 | Supply, lay and compaction Asphaltic wearing course including tack Coat (RC2)for Road Network - (RD-C-2)-Z7-C02-RD | 2028-05-28 → 2028-05-25 (-3d) | 2028-05-30 → 2028-05-28 (-2d) |  | -158.06d → -156.05d |
| 6187 | **RHD4-02-002-C02-(RD)-Pavement Marking** | 2028-06-04 → 2028-06-01 (-3d) | 2028-06-07 → 2028-06-05 (-2d) |  |  |
| RHD4CZ7C02RD7100 | Pavement Markings for Road Network - (RD-C-2)-Z7-C02-RD | 2028-06-04 → 2028-06-01 (-3d) | 2028-06-07 → 2028-06-05 (-2d) |  | -162.06d → -160.05d |
| 6005 | **RHD4-02-002-Z7-C02-Storm Network - ST** |  | 2027-10-03 → 2027-10-06 (+3d) |  |  |
| 6015 | **RHD4-02-002-C02-(ST)-GRP Pipes - 1300 mm diameter** |  | 2027-02-24 → 2027-02-18 (-6d) |  |  |
| RHD4CZ7C02ST1109 | Excavation works for GRP Pipe Line 1300 mm - (RD-C-2)-Z7-C02-ST |  | 2027-02-14 → 2027-02-09 (-5d) |  | -197.02d → -194d |
| RHD4CZ7C02ST1309 | Installing for GRP Pipe Line 1300 mm - (RD-C-2)-Z7-C02-ST | 2027-02-16 → 2026-11-07 A (-101d) | 2027-02-18 → 2027-02-14 (-4d) | 0% → 56% | -191.02d → -188d |
| RHD4CZ7C02ST1209 | Bedding works for GRP Pipe Line 1300 mm - (RD-C-2)-Z7-C02-ST | 2027-02-14 → 2026-11-12 A (-94d) | 2027-02-16 → 2027-02-11 (-5d) | 0% → 56% | -191.02d → -188d |
| RHD4CZ7C02ST1409 | Primary Test for GRP Pipe Line 1300 mm - (RD-C-2)-Z7-C02-ST | 2027-02-18 → 2027-02-15 (-3d) | 2027-02-21 → 2027-02-16 (-5d) |  | -191.02d → -188d |
| RHD4CZ7C02ST1509 | Backfilling and warning tape works for GRP Pipe Line 1300 mm - (RD-C-2)-Z7-C02-ST | 2027-02-21 → 2027-02-17 (-4d) | 2027-02-24 → 2027-02-18 (-6d) |  | -191.02d → -188d |

| ID | Task | Start | Finish | Complete | Total float |
| --- | --- | --- | --- | --- | --- |
| 6394 | **RHD4-02-002-C02-(ST)-GRP Pipes - 1400 mm diameter** |  | 2027-07-08 → 2027-07-07 (-1d) |  |  |
| RHD4CZ7C02ST1210 | Bedding works for GRP Pipe Line 1400 mm - (RD-C-2)-Z7-C02-ST |  | 2027-07-01 → 2026-11-12 A (-231d) | 80% → 100% | -175d → none |
| RHD4CZ7C02ST1310 | Installing for GRP Pipe Line 1400 mm - (RD-C-2)-Z7-C02-ST |  | 2027-07-04 → 2026-11-07 A (-239d) | 70% → 100% | -175d → none |
| RHD4CZ7C02ST1410 | Primary Test for GRP Pipe Line 1400 mm - (RD-C-2)-Z7-C02-ST | 2027-07-05 → 2027-07-04 (-1d) | 2027-07-06 → 2027-07-05 (-1d) |  | -175d → -174d |
| RHD4CZ7C02ST1510 | Backfilling and warning tape works for GRP Pipe Line 1400 mm - (RD-C-2)-Z7-C02-ST | 2027-07-07 → 2027-07-06 (-1d) | 2027-07-08 → 2027-07-07 (-1d) |  | -175d → -174d |
| 3743 | **RHD4-02-002-C02-(ST)-GRP Pipes - 1100 mm diameter** | 2027-06-30 → 2027-07-04 (+4d) | 2027-07-11 → 2027-07-14 (+3d) |  |  |
| RHD4CZ7C02ST1107 | Excavation works for GRP Pipe Line 1100 mm - (RD-C-2)-Z7-C02-ST | 2027-06-30 → 2027-07-04 (+4d) | 2027-07-01 → 2027-07-05 (+4d) |  | -185d → -188d |
| RHD4CZ7C02ST1207 | Bedding works for GRP Pipe Line 1100 mm - (RD-C-2)-Z7-C02-ST | 2027-07-03 → 2027-07-06 (+3d) | 2027-07-04 → 2027-07-07 (+3d) |  | -175d → -178d |
| RHD4CZ7C02ST1307 | Installing for GRP Pipe Line 1100 mm - (RD-C-2)-Z7-C02-ST | 2027-07-05 → 2027-07-08 (+3d) | 2027-07-06 → 2027-07-10 (+4d) |  | -175d → -178d |
| RHD4CZ7C02ST1407 | Primary Test for GRP Pipe Line 1100 mm - (RD-C-2)-Z7-C02-ST | 2027-07-07 → 2027-07-11 (+4d) | 2027-07-08 → 2027-07-12 (+4d) |  | -175d → -178d |
| RHD4CZ7C02ST1507 | Backfilling and warning tape works for GRP Pipe Line 1100 mm - (RD-C-2)-Z7-C02-ST | 2027-07-10 → 2027-07-13 (+3d) | 2027-07-11 → 2027-07-14 (+3d) |  | -175d → -178d |
| 2039 | **RHD4-02-002-C02-(ST)-GRP Pipes - 1000 mm diameter** |  | 2027-07-17 → 2027-07-20 (+3d) |  |  |
| RHD4CZ7C02ST1106 | Excavation works for GRP Pipe Line 1000 mm - (RD-C-2)-Z7-C02-ST |  | 2027-07-05 → 2027-07-08 (+3d) |  | -185d → -188d |
| RHD4CZ7C02ST1206 | Bedding works for GRP Pipe Line 1000 mm - (RD-C-2)-Z7-C02-ST |  | 2027-07-08 → 2027-07-12 (+4d) |  | -177d → -180d |
| RHD4CZ7C02ST1306 | Installing for GRP Pipe Line 1000 mm - (RD-C-2)-Z7-C02-ST |  | 2027-07-11 → 2027-07-14 (+3d) |  | -177d → -180d |
| RHD4CZ7C02ST1406 | Primary Test for GRP Pipe Line 1000 mm - (RD-C-2)-Z7-C02-ST | 2027-07-12 → 2027-07-15 (+3d) | 2027-07-13 → 2027-07-17 (+4d) |  | -177d → -180d |
| RHD4CZ7C02ST1506 | Backfilling and warning tape works for GRP Pipe Line 1000 mm - (RD-C-2)-Z7-C02-ST | 2027-07-14 → 2027-07-18 (+4d) | 2027-07-17 → 2027-07-20 (+3d) |  | -177d → -180d |
| 5254 | **RHD4-02-002-C02-(ST)-GRP Pipes - 900 mm diameter** |  | 2027-07-17 → 2027-07-20 (+3d) |  |  |
| RHD4CZ7C02ST1105 | Excavation works for GRP Pipe Line 900 mm - (RD-C-2)-Z7-C02-ST |  | 2027-07-07 → 2027-07-11 (+4d) |  | -185d → -188d |
| RHD4CZ7C02ST1205 | Bedding works for GRP Pipe Line 900 mm - (RD-C-2)-Z7-C02-ST |  | 2027-07-10 → 2027-07-13 (+3d) |  | -177d → -180d |
| RHD4CZ7C02ST1305 | Installing for GRP Pipe Line 900 mm - (RD-C-2)-Z7-C02-ST |  | 2027-07-12 → 2027-07-15 (+3d) |  | -177d → -180d |
| RHD4CZ7C02ST1405 | Primary Test for GRP Pipe Line 900 mm - (RD-C-2)-Z7-C02-ST | 2027-07-13 → 2027-07-17 (+4d) | 2027-07-14 → 2027-07-18 (+4d) |  | -177d → -180d |
| RHD4CZ7C02ST1505 | Backfilling and warning tape works for GRP Pipe Line 900 mm - (RD-C-2)-Z7-C02-ST | 2027-07-15 → 2027-07-19 (+4d) | 2027-07-17 → 2027-07-20 (+3d) |  | -177d → -180d |
| 6024 | **RHD4-02-002-C02-(ST)-MH Works - 2000 mm diameter** |  | 2027-10-03 → 2027-10-06 (+3d) |  |  |
| RHD4CZ7C02ST3102 | Excavation and PC Blinding works for MH 2000 mm - (RD-C-2)-Z7-C02-ST |  | 2027-07-20 → 2027-07-24 (+4d) | 50% → 55% | -178d → -181d |
| RHD4CZ7C02ST3202 | Installation of Base for MH 2000 mm - (RD-C-2)-Z7-C02-ST |  | 2027-07-26 → 2027-07-29 (+3d) |  | -141d → -144d |
| RHD4CZ7C02ST3302 | MH Ring and C.Slab works and Backfilling works for MH 2000 mm - (RD-C-2)-Z7-C02-ST | 2027-07-27 → 2027-07-31 (+4d) | 2027-08-01 → 2027-08-04 (+3d) |  | -141d → -144d |
| RHD4CZ7C02ST3402 | Steel Cover for MH 2000 mm - (RD-C-2)-Z7-C02-ST | 2027-09-22 → 2027-09-27 (+5d) | 2027-09-27 → 2027-09-30 (+3d) |  | -185d → -188d |
| RHD4CZ7C02ST3502 | Finishing, Benching, Testing works for MH 2000 mm - (RD-C-2)-Z7-C02-ST | 2027-09-28 → 2027-10-02 (+4d) | 2027-10-03 → 2027-10-06 (+3d) |  | -185d → -188d |
| 6023 | **RHD4-02-002-C02-(ST)-MH Works - 1500 mm diameter** | 2027-07-21 → 2027-07-25 (+4d) | 2027-08-07 → 2027-08-10 (+3d) |  |  |
| RHD4CZ7C02ST3101 | Excavation and PC Blinding works for MH 1500 mm - (RD-C-2)-Z7-C02-ST | 2027-07-21 → 2027-07-25 (+4d) | 2027-07-22 → 2027-07-26 (+4d) |  | -178d → -181d |
| RHD4CZ7C02ST3201 | Installation of Base for MH 1500 mm - (RD-C-2)-Z7-C02-ST | 2027-07-24 → 2027-07-27 (+3d) | 2027-07-25 → 2027-07-28 (+3d) |  | -176d → -179d |
| RHD4CZ7C02ST3301 | MH Ring and C.Slab works and Backfilling works for MH 1500 mm - (RD-C-2)-Z7-C02-ST | 2027-07-26 → 2027-07-29 (+3d) | 2027-07-27 → 2027-07-31 (+4d) |  | -176d → -179d |
| RHD4CZ7C02ST3401 | Steel Cover for MH 1500 mm - (RD-C-2)-Z7-C02-ST | 2027-07-28 → 2027-08-01 (+4d) | 2027-07-29 → 2027-08-02 (+4d) |  | -162d → -165d |
| RHD4CZ7C02ST3501 | Finishing, Benching, Testing works for MH 1500 mm - (RD-C-2)-Z7-C02-ST | 2027-08-05 → 2027-08-09 (+4d) | 2027-08-07 → 2027-08-10 (+3d) |  | -167d → -170d |
| 6022 | **RHD4-02-002-C02-(ST)-MH Works - 1200 mm diameter** | 2027-08-02 → 2027-08-01 (-1d) | 2027-08-14 → 2027-08-12 (-2d) |  |  |
| RHD4CZ7C02ST3100 | Excavation and PC Blinding works for MH 1200 mm - (RD-C-2)-Z7-C02-ST | 2027-08-02 → 2027-08-01 (-1d) | 2027-08-04 → 2027-08-02 (-2d) |  | -186.02d → -185d |
| RHD4CZ7C02ST3200 | Installation of Base for MH 1200 mm - (RD-C-2)-Z7-C02-ST | 2027-08-04 → 2027-08-03 (-1d) | 2027-08-07 → 2027-08-04 (-3d) |  | -186.02d → -185d |
| RHD4CZ7C02ST3300 | MH Ring and C.Slab works and Backfilling works for MH 1200 mm - (RD-C-2)-Z7-C02-ST | 2027-08-07 → 2027-08-05 (-2d) | 2027-08-09 → 2027-08-07 (-2d) |  | -186.02d → -185d |
| RHD4CZ7C02ST3400 | Steel Cover for MH 1200 mm - (RD-C-2)-Z7-C02-ST |  | 2027-08-11 → 2027-08-10 (-1d) |  | -176.02d → -176d |
| RHD4CZ7C02ST3500 | Finishing, Benching, Testing works for MH 1200 mm - (RD-C-2)-Z7-C02-ST |  | 2027-08-14 → 2027-08-12 (-2d) |  | -176.02d → -176d |
| 6014 | **RHD4-02-002-C02-(ST)-GRP Pipes - 1200 mm diameter** | 2027-02-14 → 2027-02-10 (-4d) | 2027-07-19 → 2027-07-22 (+3d) |  |  |
| RHD4CZ7C02ST1108 | Excavation works for GRP Pipe Line 1200 mm - (RD-C-2)-Z7-C02-ST | 2027-02-14 → 2027-02-10 (-4d) | 2027-02-16 → 2027-02-11 (-5d) |  | -147.04d → -144.02d |
| RHD4CZ7C02ST1208 | Bedding works for GRP Pipe Line 1200 mm - (RD-C-2)-Z7-C02-ST | 2027-02-16 → 2027-02-13 (-3d) | 2027-02-18 → 2027-02-14 (-4d) |  | -147.04d → -144.02d |
| RHD4CZ7C02ST1308 | Installing for GRP Pipe Line 1200 mm - (RD-C-2)-Z7-C02-ST | 2027-02-18 → 2027-02-15 (-3d) | 2027-02-21 → 2027-02-16 (-5d) |  | -147.04d → -144.02d |
| RHD4CZ7C02ST1408 | Primary Test for GRP Pipe Line 1200 mm - (RD-C-2)-Z7-C02-ST | 2027-02-21 → 2027-02-17 (-4d) | 2027-02-24 → 2027-02-18 (-6d) |  | -147.04d → -144.02d |
| RHD4CZ7C02ST1508 | Backfilling and warning tape works for GRP Pipe Line 1200 mm - (RD-C-2)-Z7-C02-ST | 2027-07-18 → 2027-07-21 (+3d) | 2027-07-19 → 2027-07-22 (+3d) |  | -177d → -180d |
| 6007 | **RHD4-02-002-C02-(ST)-GRP Pipes - 500 mm diameter** | 2027-07-08 → 2027-07-12 (+4d) | 2027-07-19 → 2027-07-22 (+3d) |  |  |
| RHD4CZ7C02ST1101 | Excavation works for GRP Pipe Line 500 mm - (RD-C-2)-Z7-C02-ST | 2027-07-08 → 2027-07-12 (+4d) | 2027-07-10 → 2027-07-13 (+3d) |  | -185d → -188d |
| RHD4CZ7C02ST1201 | Bedding works for GRP Pipe Line 500 mm - (RD-C-2)-Z7-C02-ST | 2027-07-11 → 2027-07-14 (+3d) | 2027-07-12 → 2027-07-15 (+3d) |  | -176d → -179d |
| RHD4CZ7C02ST1301 | Installing for GRP Pipe Line 500 mm - (RD-C-2)-Z7-C02-ST | 2027-07-13 → 2027-07-17 (+4d) | 2027-07-14 → 2027-07-18 (+4d) |  | -176d → -179d |
| RHD4CZ7C02ST1401 | Primary Test for GRP Pipe Line 500 mm - (RD-C-2)-Z7-C02-ST | 2027-07-15 → 2027-07-19 (+4d) | 2027-07-17 → 2027-07-20 (+3d) |  | -176d → -179d |
| RHD4CZ7C02ST1501 | Backfilling and warning tape works for GRP Pipe Line 500 mm - (RD-C-2)-Z7-C02-ST | 2027-07-18 → 2027-07-21 (+3d) | 2027-07-19 → 2027-07-22 (+3d) |  | -176d → -179d |
| 6006 | **RHD4-02-002-C02-(ST)-GRP Pipes - 400 mm diameter** | 2027-07-11 → 2027-07-14 (+3d) | 2027-07-21 → 2027-07-25 (+4d) |  |  |
| RHD4CZ7C02ST1100 | Excavation works for GRP Pipe Line 400 mm - (RD-C-2)-Z7-C02-ST | 2027-07-11 → 2027-07-14 (+3d) | 2027-07-12 → 2027-07-15 (+3d) |  | -185d → -188d |
| RHD4CZ7C02ST1200 | Bedding works for GRP Pipe Line 400 mm - (RD-C-2)-Z7-C02-ST | 2027-07-13 → 2027-07-17 (+4d) | 2027-07-14 → 2027-07-18 (+4d) |  | -176d → -179d |
| RHD4CZ7C02ST1300 | Installing for GRP Pipe Line 400 mm - (RD-C-2)-Z7-C02-ST | 2027-07-15 → 2027-07-19 (+4d) | 2027-07-17 → 2027-07-20 (+3d) |  | -176d → -179d |
| RHD4CZ7C02ST1400 | Primary Test for GRP Pipe Line 400 mm - (RD-C-2)-Z7-C02-ST | 2027-07-18 → 2027-07-21 (+3d) | 2027-07-19 → 2027-07-22 (+3d) |  | -176d → -179d |
| RHD4CZ7C02ST1500 | Backfilling and warning tape works for GRP Pipe Line 400 mm - (RD-C-2)-Z7-C02-ST | 2027-07-20 → 2027-07-24 (+4d) | 2027-07-21 → 2027-07-25 (+4d) |  | -176d → -179d |
| 6020 | **RHD4-02-002-C02-(ST)-UPVC Pipes - 300 mm diameter** |  | 2027-08-04 → 2027-08-08 (+4d) |  |  |
| RHD4CZ7C02ST2100 | Excavation works for UPVC Pipe Line 300 mm - (RD-C-2)-Z7-C02-ST |  | 2027-07-18 → 2027-07-21 (+3d) |  | -185d → -188d |
| RHD4CZ7C02ST2200 | Bedding works for UPVC Pipe Line 300 mm - (RD-C-2)-Z7-C02-ST |  | 2027-07-22 → 2027-07-26 (+4d) |  | -185d → -188d |
| RHD4CZ7C02ST2300 | Installing for UPVC Pipe Line 300 mm - (RD-C-2)-Z7-C02-ST |  | 2027-07-28 → 2027-08-01 (+4d) |  | -185d → -188d |
| RHD4CZ7C02ST2500 | Backfilling and warning tape works for UPVC Pipe Line 300 mm - (RD-C-2)-Z7-C02-ST |  | 2027-08-04 → 2027-08-08 (+4d) |  | -185d → -188d |
| RHD4CZ7C02ST2400 | Primary Test for UPVC Pipe Line 300 mm - (RD-C-2)-Z7-C02-ST | 2027-07-29 → 2027-08-02 (+4d) | 2027-08-01 → 2027-08-04 (+3d) |  | -185d → -188d |
| 6028 | **RHD4-02-002-C02-(ST)-Concrete Encasement** | 2027-07-27 → 2027-07-31 (+4d) | 2027-07-28 → 2027-08-01 (+4d) |  |  |
| RHD4CZ7C02ST6100 | Pipe Encasement for Storm Pipelines - (RD-C-2)-Z7-C02-ST | 2027-07-27 → 2027-07-31 (+4d) | 2027-07-28 → 2027-08-01 (+4d) |  | -182d → -185d |
| 6029 | **RHD4-02-002-Z7-C02-Catch Basin - ST** |  | 2027-10-11 → 2027-10-14 (+3d) |  |  |
| 6030 | **RHD4-02-002-C02-(ST)-Single Catch Basin Works** |  | 2027-10-09 → 2027-10-12 (+3d) |  |  |
| RHD4CZ7C02ST7100 | Excavation works for Single Catch Basin - (RD-C-2)-Z7-C02-ST |  | 2027-08-16 → 2027-08-14 (-2d) |  | -187.02d → -186d |

| ID | Task | Start | Finish | Total float |
| --- | --- | --- | --- | --- |
| RHD4CZ7C02ST7200 | PC Blinding, Installation and Pipe connection for Single Catch Basin - (RD-C-2)-Z7-C02-ST |  | 2027-08-22 → 2027-08-19 (-3d) | -159.02d → -158d |
| RHD4CZ7C02ST7300 | Rings & C.Slab & Final Backfill for Single Catch Basin - (RD-C-2)-Z7-C02-ST |  | 2027-08-29 → 2027-08-26 (-3d) | -159.02d → -158d |
| RHD4CZ7C02ST7400 | Steel Cover for Single Catch Basin - (RD-C-2)-Z7-C02-ST | 2027-09-22 → 2027-09-27 (+5d) | 2027-09-28 → 2027-10-02 (+4d) | -180d → -183d |
| RHD4CZ7C02ST7500 | Finishing and Insulation works for Single Catch Basin - (RD-C-2)-Z7-C02-ST | 2027-09-29 → 2027-10-03 (+4d) | 2027-10-09 → 2027-10-12 (+3d) | -180d → -183d |
| 6031 | **RHD4-02-002-C02-(ST)-Double Catch Basin Works** | 2027-08-10 → 2027-08-09 (-1d) | 2027-10-11 → 2027-10-14 (+3d) |  |
| RHD4CZ7C02ST8100 | Excavation works for Double Catch Basin - (RD-C-2)-Z7-C02-ST | 2027-08-10 → 2027-08-09 (-1d) | 2027-08-12 → 2027-08-10 (-2d) | -187.02d → -186d |
| RHD4CZ7C02ST8200 | PC Blinding, Installation and Pipe connection for Double Catch Basin - (RD-C-2)-Z7-C02-ST | 2027-08-22 → 2027-08-21 (-1d) | 2027-08-24 → 2027-08-22 (-2d) | -145.02d → -144d |
| RHD4CZ7C02ST8300 | Rings & C.Slab & Final Backfillfor Double Catch Basin - (RD-C-2)-Z7-C02-ST | 2027-08-29 → 2027-08-28 (-1d) | 2027-08-31 → 2027-08-29 (-2d) | -149.02d → -148d |
| RHD4CZ7C02ST8400 | Steel Cover for Double Catch Basin - (RD-C-2)-Z7-C02-ST | 2027-09-29 → 2027-10-03 (+4d) | 2027-09-30 → 2027-10-04 (+4d) | -173d → -176d |
| RHD4CZ7C02ST8500 | Finishing and Insulation works for Double Catch Basin - (RD-C-2)-Z7-C02-ST | 2027-10-10 → 2027-10-13 (+3d) | 2027-10-11 → 2027-10-14 (+3d) | -180d → -183d |
| 3973 | **RHD4-02-002-Z7-C02-Sewage Network - SW** |  | 2027-08-18 → 2027-08-22 (+4d) |  |
| 3785 | **RHD4-02-002-C02-(SW)-GRP Pipes - 300 mm diameter** |  | 2027-08-15 → 2027-08-18 (+3d) |  |
| RHD4CZ7C02SW1100 | Excavation works for GRP Pipe Line 300 mm - (RD-C-2)-Z7-C02-SW |  | 2027-08-05 → 2027-08-09 (+4d) | -185d → -188d |
| RHD4CZ7C02SW1200 | Bedding works for GRP Pipe Line 300 mm - (RD-C-2)-Z7-C02-SW | 2027-08-07 → 2027-08-10 (+3d) | 2027-08-08 → 2027-08-11 (+3d) | -185d → -188d |
| RHD4CZ7C02SW1300 | Installing for GRP Pipe Line 300 mm - (RD-C-2)-Z7-C02-SW | 2027-08-09 → 2027-08-12 (+3d) | 2027-08-10 → 2027-08-14 (+4d) | -185d → -188d |
| RHD4CZ7C02SW1400 | Primary Test for GRP Pipe Line 300 mm - (RD-C-2)-Z7-C02-SW | 2027-08-11 → 2027-08-15 (+4d) | 2027-08-12 → 2027-08-16 (+4d) | -185d → -188d |
| RHD4CZ7C02SW1500 | Backfilling and warning tape works for GRP Pipe Line 300 mm - (RD-C-2)-Z7-C02-SW | 2027-08-14 → 2027-08-17 (+3d) | 2027-08-15 → 2027-08-18 (+3d) | -185d → -188d |
| 3794 | **RHD4-02-002-C02-(SW)-MH Works - 1200 mm diameter** |  | 2027-08-18 → 2027-08-22 (+4d) |  |
| RHD4CZ7C02SW3200 | Installation of Base for MH 1200 mm - (RD-C-2)-Z7-C02-SW | 2027-08-07 → 2027-08-10 (+3d) | 2027-08-09 → 2027-08-12 (+3d) | -180d → -183d |
| RHD4CZ7C02SW3300 | MH Ring and C.Slab works and Backfilling works for MH 1200 mm - (RD-C-2)-Z7-C02-SW | 2027-08-10 → 2027-08-14 (+4d) | 2027-08-12 → 2027-08-16 (+4d) | -180d → -183d |
| RHD4CZ7C02SW3400 | Steel Cover for MH 1200 mm - (RD-C-2)-Z7-C02-SW | 2027-08-14 → 2027-08-17 (+3d) | 2027-08-15 → 2027-08-18 (+3d) | -180d → -183d |
| RHD4CZ7C02SW3500 | Finishing, Benching, Testing works for MH 1200 mm - (RD-C-2)-Z7-C02-SW | 2027-08-16 → 2027-08-19 (+3d) | 2027-08-18 → 2027-08-22 (+4d) | -180d → -183d |
| 4299 | **RHD4-02-002-Z7-C02-Concrete Box Culvert - ST** |  | 2026-12-09 → 2026-12-16 (+7d) |  |
| 4300 | **RHD4-02-002-C02-(ST)-Concrete Box Culvert** |  | 2026-12-09 → 2026-12-16 (+7d) |  |
| RHD4CZ7C02ST4500 | Wall and slab works for Box Culvert - (RD-C-2)-Z7-C02-ST |  | 2026-11-10 → 2026-11-17 (+7d) | -174d → -175d |
| RHD4CZ7C02ST4700 | Backfilling works for Box Culvert - (RD-C-2)-Z7-C02-ST | 2026-11-18 → 2026-11-25 (+7d) | 2026-12-09 → 2026-12-16 (+7d) | -174d → -175d |
| 4301 | **RHD4-02-002-C02-(ST)-Concrete Chambers** | 2026-10-01 → 2026-11-18 (+48d) | 2026-11-19 → 2026-11-26 (+7d) |  |
| RHD4CZ7C02ST5100 | Excavation and Bedding for Concrete Chambers - for Box Culvert - (RD-C-2)-Z7-C02-ST | 2026-10-01 A → 2026-11-18 (+48d) | 2026-11-12 → 2026-11-19 (+7d) | -174d → -175d |
| RHD4CZ7C02ST5200 | PC works for Concrete Chambers - for Box Culvert - (RD-C-2)-Z7-C02-ST | 2026-10-04 A → 2026-11-21 (+48d) | 2026-11-15 → 2026-11-22 (+7d) | -174d → -175d |
| RHD4CZ7C02ST5300 | Installation for Concrete Chambers - for Box Culvert - (RD-C-2)-Z7-C02-ST | 2026-10-06 A → 2026-11-23 (+48d) | 2026-11-17 → 2026-11-24 (+7d) | -174d → -175d |
| RHD4CZ7C02ST5400 | Backfilling works for Concrete Chambers - for Box Culvert - (RD-C-2)-Z7-C02-ST | 2026-11-18 → 2026-11-25 (+7d) | 2026-11-19 → 2026-11-26 (+7d) | -157d → -158d |
| 6091 | **RHD4-02-002-Z7-C02-Potable Network - PT** | 2027-08-16 → 2027-08-19 (+3d) | 2027-09-29 → 2027-10-03 (+4d) |  |
| 6093 | **RHD4-02-002-C02-(PT)-HDPE Pipes - 160 mm diameter** | 2027-08-16 → 2027-08-19 (+3d) | 2027-09-09 → 2027-09-13 (+4d) |  |
| RHD4CZ7C02PT1101 | Excavation works for HDPE Pipline 160 mm - (RD-C-2)-Z7-C02-PT | 2027-08-16 → 2027-08-19 (+3d) | 2027-08-19 → 2027-08-23 (+4d) | -185d → -188d |
| RHD4CZ7C02PT1201 | Bedding works for HDPE Pipline 160 mm - (RD-C-2)-Z7-C02-PT | 2027-08-21 → 2027-08-24 (+3d) | 2027-08-24 → 2027-08-28 (+4d) | -185d → -188d |
| RHD4CZ7C02PT1301 | Installing for HDPE Pipline 160 mm - (RD-C-2)-Z7-C02-PT | 2027-08-25 → 2027-08-29 (+4d) | 2027-08-31 → 2027-09-04 (+4d) | -185d → -188d |
| RHD4CZ7C02PT1401 | Primary Test for HDPE Pipline 160 mm - (RD-C-2)-Z7-C02-PT | 2027-09-01 → 2027-09-05 (+4d) | 2027-09-04 → 2027-09-07 (+3d) | -185d → -188d |
| RHD4CZ7C02PT1501 | Backfilling and warning tape works for HDPE Pipline 160 mm - (RD-C-2)-Z7-C02-PT | 2027-09-05 → 2027-09-08 (+3d) | 2027-09-09 → 2027-09-13 (+4d) | -185d → -188d |
| 4969 | **RHD4-02-002-C02-(PT)-Fire Hydrant** | 2027-09-11 → 2027-09-14 (+3d) | 2027-09-22 → 2027-09-27 (+5d) |  |
| RHD4CZ7C02PT4100 | Excavation and Bedding and Pipe Installation for Fire Hydrant - (RD-C-2)-Z7-C02-PT | 2027-09-11 → 2027-09-14 (+3d) | 2027-09-13 → 2027-09-16 (+3d) | -177d → -180d |
| RHD4CZ7C02PT4200 | Valve Installation for Fire Hydrant - (RD-C-2)-Z7-C02-PT | 2027-09-14 → 2027-09-18 (+4d) | 2027-09-15 → 2027-09-19 (+4d) | -177d → -180d |
| RHD4CZ7C02PT4300 | Stem for Fire Hydrant - (RD-C-2)-Z7-C02-PT | 2027-09-16 → 2027-09-20 (+4d) | 2027-09-18 → 2027-09-21 (+3d) | -177d → -180d |
| RHD4CZ7C02PT4400 | Fire Installation for Fire Hydrant - (RD-C-2)-Z7-C02-PT | 2027-09-19 → 2027-09-22 (+3d) | 2027-09-20 → 2027-09-25 (+5d) | -177d → -180d |
| RHD4CZ7C02PT4500 | Protection Barriers for Fire Hydrant - (RD-C-2)-Z7-C02-PT | 2027-09-21 → 2027-09-26 (+5d) | 2027-09-22 → 2027-09-27 (+5d) | -177d → -180d |
| 6100 | **RHD4-02-002-C02-(PT)-Wash out Valve Chambers** | 2027-09-11 → 2027-09-14 (+3d) | 2027-09-19 → 2027-09-22 (+3d) |  |
| RHD4CZ7C02PT2101 | Excavation and Bedding for Wash out Valve Chambers for Potable Water Network - (RD-C-2)-Z7-C02-PT | 2027-09-11 → 2027-09-14 (+3d) | 2027-09-12 → 2027-09-15 (+3d) | -185d → -188d |
| RHD4CZ7C02PT2201 | PC works for Wash out Valve Chambers for Potable Water Network - (RD-C-2)-Z7-C02-PT | 2027-09-13 → 2027-09-16 (+3d) | 2027-09-14 → 2027-09-18 (+4d) | -185d → -188d |
| RHD4CZ7C02PT2301 | Installation for Wash out Valve Chambers for Potable Water Network - (RD-C-2)-Z7-C02-PT | 2027-09-15 → 2027-09-19 (+4d) | 2027-09-16 → 2027-09-20 (+4d) | -185d → -188d |
| RHD4CZ7C02PT2401 | Backfilling works for Wash out Valve Chambers for Potable Water Network - (RD-C-2)-Z7-C02-PT | 2027-09-18 → 2027-09-21 (+3d) | 2027-09-19 → 2027-09-22 (+3d) | -185d → -188d |
| 6101 | **RHD4-02-002-C02-(PT)-Wash out Valves** | 2027-09-18 → 2027-09-21 (+3d) | 2027-09-21 → 2027-09-26 (+5d) |  |
| RHD4CZ7C02PT3102 | Installation for Wash out Valves for Potable Water Network - (RD-C-2)-Z7-C02-PT | 2027-09-18 → 2027-09-21 (+3d) | 2027-09-19 → 2027-09-22 (+3d) | -185d → -188d |
| RHD4CZ7C02PT3202 | Stem and Service box for Wash out Valves for Potable Water Network - (RD-C-2)-Z7-C02-PT | 2027-09-20 → 2027-09-25 (+5d) | 2027-09-21 → 2027-09-26 (+5d) | -185d → -188d |
| 6102 | **RHD4-02-002-C02-(PT)-Air Valve Chambers** | 2027-09-11 → 2027-09-14 (+3d) | 2027-09-19 → 2027-09-22 (+3d) |  |
| RHD4CZ7C02PT2102 | Excavation and Bedding for Air Valve Chambers for Potable Water Network - (RD-C-2)-Z7-C02-PT | 2027-09-11 → 2027-09-14 (+3d) | 2027-09-12 → 2027-09-15 (+3d) | -182d → -185d |
| RHD4CZ7C02PT2202 | PC works for Air Valve Chambers for Potable Water Network - (RD-C-2)-Z7-C02-PT | 2027-09-13 → 2027-09-16 (+3d) | 2027-09-14 → 2027-09-18 (+4d) | -182d → -185d |
| RHD4CZ7C02PT2302 | Installation for Air Valve Chambers for Potable Water Network - (RD-C-2)-Z7-C02-PT | 2027-09-15 → 2027-09-19 (+4d) | 2027-09-16 → 2027-09-20 (+4d) | -182d → -185d |
| RHD4CZ7C02PT2402 | Backfilling works for Air Valve Chambers for Potable Water Network - (RD-C-2)-Z7-C02-PT | 2027-09-18 → 2027-09-21 (+3d) | 2027-09-19 → 2027-09-22 (+3d) | -182d → -185d |
| 6103 | **RHD4-02-002-C02-(PT)-Air Valves** | 2027-09-18 → 2027-09-21 (+3d) | 2027-09-21 → 2027-09-26 (+5d) |  |
| RHD4CZ7C02PT3103 | Installation for Air Valves for Potable Water Network - (RD-C-2)-Z7-C02-PT | 2027-09-18 → 2027-09-21 (+3d) | 2027-09-19 → 2027-09-22 (+3d) | -182d → -185d |
| RHD4CZ7C02PT3203 | Stem and Service box for Air Valves for Potable Water Network - (RD-C-2)-Z7-C02-PT | 2027-09-20 → 2027-09-25 (+5d) | 2027-09-21 → 2027-09-26 (+5d) | -182d → -185d |
| 6097 | **RHD4-02-002-C02-(PT)-Gate Valves (Direct Buried)** | 2027-09-22 → 2027-09-27 (+5d) | 2027-09-29 → 2027-10-03 (+4d) |  |
| RHD4CZ7C02PT3100 | Installation for Direct Buried Gate Valves - (RD-C-2)-Z7-C02-PT | 2027-09-22 → 2027-09-27 (+5d) | 2027-09-26 → 2027-09-29 (+3d) | -182d → -185d |
| RHD4CZ7C02PT3200 | Stem and Service box for Direct Buried Gate Valves - (RD-C-2)-Z7-C02-PT | 2027-09-27 → 2027-09-30 (+3d) | 2027-09-29 → 2027-10-03 (+4d) | -182d → -185d |
| 6106 | **RHD4-02-002-Z7-C02-Irrigation Network - IRR** | 2027-09-30 → 2027-10-04 (+4d) | 2027-10-23 → 2027-10-26 (+3d) |  |
| 6107 | **RHD4-02-002-C02-(IRR)-HDPE Pipes - 160 mm diameter** | 2027-10-06 → 2027-10-10 (+4d) | 2027-10-17 → 2027-10-20 (+3d) |  |
| RHD4CZ7C02IRR1100 | Excavation works for HDPE Pipline 160 mm - (RD-C-2)-Z7-C02-IRR | 2027-10-06 → 2027-10-10 (+4d) | 2027-10-07 → 2027-10-11 (+4d) | -179d → -182d |
| RHD4CZ7C02IRR1200 | Bedding works for HDPE Pipline 160 mm - (RD-C-2)-Z7-C02-IRR | 2027-10-09 → 2027-10-12 (+3d) | 2027-10-10 → 2027-10-13 (+3d) | -151d → -154d |
| RHD4CZ7C02IRR1300 | Installing for HDPE Pipline 160 mm - (RD-C-2)-Z7-C02-IRR | 2027-10-11 → 2027-10-14 (+3d) | 2027-10-12 → 2027-10-16 (+4d) | -151d → -154d |
| RHD4CZ7C02IRR1400 | Primary Test for HDPE Pipline 160 mm - (RD-C-2)-Z7-C02-IRR | 2027-10-13 → 2027-10-17 (+4d) | 2027-10-14 → 2027-10-18 (+4d) | -151d → -154d |
| RHD4CZ7C02IRR1500 | Backfilling and warning tape works for HDPE Pipline 160 mm - (RD-C-2)-Z7-C02-IRR | 2027-10-16 → 2027-10-19 (+3d) | 2027-10-17 → 2027-10-20 (+3d) | -151d → -154d |

| ID | Task | Start | Finish | Total float |
| --- | --- | --- | --- | --- |
| 6111 | **RHD4-02-002-C02-(IRR)-HDPE Pipes - 315 mm diameter** | 2027-09-30 → 2027-10-04 (+4d) | 2027-10-23 → 2027-10-26 (+3d) |  |
| RHD4CZ7C02IRR1104 | Excavation works for HDPE Pipline 315 mm - (RD-C-2)-Z7-C02-IRR | 2027-09-30 → 2027-10-04 (+4d) | 2027-10-05 → 2027-10-09 (+4d) | -179d → -182d |
| RHD4CZ7C02IRR1204 | Bedding works for HDPE Pipline 315 mm - (RD-C-2)-Z7-C02-IRR | 2027-10-06 → 2027-10-10 (+4d) | 2027-10-10 → 2027-10-13 (+3d) | -154d → -157d |
| RHD4CZ7C02IRR1304 | Installing for HDPE Pipline 315 mm - (RD-C-2)-Z7-C02-IRR | 2027-10-11 → 2027-10-14 (+3d) | 2027-10-16 → 2027-10-19 (+3d) | -154d → -157d |
| RHD4CZ7C02IRR1404 | Primary Test for HDPE Pipline 315 mm - (RD-C-2)-Z7-C02-IRR | 2027-10-17 → 2027-10-20 (+3d) | 2027-10-18 → 2027-10-21 (+3d) | -154d → -157d |
| RHD4CZ7C02IRR1504 | Backfilling and warning tape works for HDPE Pipline 315 mm - (RD-C-2)-Z7-C02-IRR | 2027-10-19 → 2027-10-23 (+4d) | 2027-10-23 → 2027-10-26 (+3d) | -154d → -157d |
| 6115 | **RHD4-02-002-C02-(IRR)-Gate Valves (Direct Buried)** | 2027-10-14 → 2027-10-18 (+4d) | 2027-10-19 → 2027-10-23 (+4d) |  |
| RHD4CZ7C02IRR3100 | Installation for Direct Buried Gate Valves - (RD-C-2)-Z7-C02-IRR | 2027-10-14 → 2027-10-18 (+4d) | 2027-10-16 → 2027-10-19 (+3d) | -150d → -153d |
| RHD4CZ7C02IRR3200 | Stem and Service box for Direct Buried Gate Valves - (RD-C-2)-Z7-C02-IRR | 2027-10-18 → 2027-10-21 (+3d) | 2027-10-19 → 2027-10-23 (+4d) | -151d → -154d |
| 6116 | **RHD4-02-002-C02-(IRR)-Butterfly Valve Chamber** | 2027-10-09 → 2027-10-12 (+3d) | 2027-10-18 → 2027-10-21 (+3d) |  |
| RHD4CZ7C02IRR2100 | Excavation and Bedding for Butterfly Valve Chamber for Irrigation Network - (RD-C-2)-Z7-C02-IRR | 2027-10-09 → 2027-10-12 (+3d) | 2027-10-10 → 2027-10-13 (+3d) | -153d → -156d |
| RHD4CZ7C02IRR2200 | PC works for Butterfly Valve Chamber for Irrigation Network - (RD-C-2)-Z7-C02-IRR | 2027-10-11 → 2027-10-14 (+3d) | 2027-10-12 → 2027-10-16 (+4d) | -153d → -156d |
| RHD4CZ7C02IRR2300 | Installation for Butterfly Valve Chamber for Irrigation Network - (RD-C-2)-Z7-C02-IRR | 2027-10-13 → 2027-10-17 (+4d) | 2027-10-14 → 2027-10-18 (+4d) | -153d → -156d |
| RHD4CZ7C02IRR2400 | Backfilling works for Butterfly Valve Chamber for Irrigation Network - (RD-C-2)-Z7-C02-IRR | 2027-10-16 → 2027-10-19 (+3d) | 2027-10-18 → 2027-10-21 (+3d) | -151d → -154d |
| 6117 | **RHD4-02-002-C02-(IRR)-Butterfly Valves** | 2027-10-16 → 2027-10-19 (+3d) | 2027-10-19 → 2027-10-23 (+4d) |  |
| RHD4CZ7C02IRR3101 | Installation for Butterfly Valves for Irrigation Network - (RD-C-2)-Z7-C02-IRR | 2027-10-16 → 2027-10-19 (+3d) | 2027-10-17 → 2027-10-20 (+3d) | -153d → -156d |
| RHD4CZ7C02IRR3201 | Stem and Service box for Butterfly Valves for Irrigation Network - (RD-C-2)-Z7-C02-IRR | 2027-10-18 → 2027-10-21 (+3d) | 2027-10-19 → 2027-10-23 (+4d) | -153d → -156d |
| 6686 | **RHD4-02-002-C02-(IRR)-Wash out Valves** | 2027-10-16 → 2027-10-19 (+3d) | 2027-10-19 → 2027-10-23 (+4d) |  |
| RHD4CZ7C02IRR3102 | Installation for Wash out Valve for Irrigation Network - (RD-C-2)-Z7-C02-IRR | 2027-10-16 → 2027-10-19 (+3d) | 2027-10-17 → 2027-10-20 (+3d) | -179d → -182d |
| RHD4CZ7C02IRR3202 | Stem and Service box for Wash out Valve for Irrigation Network - (RD-C-2)-Z7-C02-IRR | 2027-10-18 → 2027-10-21 (+3d) | 2027-10-19 → 2027-10-23 (+4d) | -179d → -182d |
| 6685 | **RHD4-02-002-C02-(IRR)-Wash out Chamber** | 2027-10-09 → 2027-10-12 (+3d) | 2027-10-17 → 2027-10-20 (+3d) |  |
| RHD4CZ7C02IRR2101 | Excavation and Bedding for Wash out Chamber for Irrigation Network - (RD-C-2)-Z7-C02-IRR | 2027-10-09 → 2027-10-12 (+3d) | 2027-10-10 → 2027-10-13 (+3d) | -179d → -182d |
| RHD4CZ7C02IRR2201 | PC works for Wash out Chamber for Irrigation Network - (RD-C-2)-Z7-C02-IRR | 2027-10-11 → 2027-10-14 (+3d) | 2027-10-12 → 2027-10-16 (+4d) | -179d → -182d |
| RHD4CZ7C02IRR2301 | Installation for Wash out Chamber for Irrigation Network - (RD-C-2)-Z7-C02-IRR | 2027-10-13 → 2027-10-17 (+4d) | 2027-10-14 → 2027-10-18 (+4d) | -179d → -182d |
| RHD4CZ7C02IRR2401 | Backfilling works for Wash out Chamber for Irrigation Network - (RD-C-2)-Z7-C02-IRR | 2027-10-16 → 2027-10-19 (+3d) | 2027-10-17 → 2027-10-20 (+3d) | -179d → -182d |
| 6140 | **RHD4-02-002-Z7-C02-Medium Voltage Network - MV** | 2027-07-06 → 2027-07-04 (-2d) | 2027-08-31 → 2027-08-28 (-3d) |  |
| 6141 | **RHD4-02-002-C02-(MV)-Medium Voltage cable trench** | 2027-07-06 → 2027-07-04 (-2d) | 2027-08-24 → 2027-08-21 (-3d) |  |
| RHD4CZ7C02MV1100 | Excavation for Medium Voltage Trench - (RD-C-2)-Z7-C02-MV | 2027-07-06 → 2027-07-04 (-2d) | 2027-07-19 → 2027-07-15 (-4d) | -147.02d → -145d |
| RHD4CZ7C02MV1200 | Trench Backfilling for Medium Voltage Network - (RD-C-2)-Z7-C02-MV | 2027-08-11 → 2027-08-09 (-2d) | 2027-08-24 → 2027-08-21 (-3d) | -127.02d → -125d |
| 6142 | **RHD4-02-002-C02-(MV)-Medium Voltage duct banks** | 2027-07-19 → 2027-07-17 (-2d) | 2027-07-29 → 2027-07-26 (-3d) |  |
| RHD4CZ7C02MV2100 | Excavation of Duct Banks for Medium Voltage Network - (RD-C-2)-Z7-C02-MV | 2027-07-19 → 2027-07-17 (-2d) | 2027-07-21 → 2027-07-18 (-3d) | -147.02d → -145d |
| RHD4CZ7C02MV2200 | Installation of Duct Banks for Medium Voltage Network - (RD-C-2)-Z7-C02-MV | 2027-07-21 → 2027-07-19 (-2d) | 2027-07-25 → 2027-07-21 (-4d) | -127.02d → -125d |
| RHD4CZ7C02MV2300 | Pouring of Duct Banks for Medium Voltage Network - (RD-C-2)-Z7-C02-MV | 2027-07-25 → 2027-07-22 (-3d) | 2027-07-27 → 2027-07-24 (-3d) | -127.02d → -125d |
| RHD4CZ7C02MV2400 | Backfilling of Duct Banks for Medium Voltage Network - (RD-C-2)-Z7-C02-MV | 2027-07-27 → 2027-07-25 (-2d) | 2027-07-29 → 2027-07-26 (-3d) | -127.02d → -125d |
| 6143 | **RHD4-02-002-C02-(MV)-Medium Voltage cables 3Cx 500 mm²** | 2027-07-19 → 2027-07-17 (-2d) | 2027-08-31 → 2027-08-28 (-3d) |  |
| RHD4CZ7C02MV3100 | Installation of Medium Voltage Cables 3Cx 500 mm² - (RD-C-2)-Z7-C02-MV | 2027-07-19 → 2027-07-17 (-2d) | 2027-08-05 → 2027-08-02 (-3d) | -133.02d → -131d |
| RHD4CZ7C02MV3200 | Joints Installation of Medium Voltage Cables 3Cx 500 mm² - (RD-C-2)-Z7-C02-MV | 2027-08-05 → 2027-08-03 (-2d) | 2027-08-11 → 2027-08-08 (-3d) | -133.02d → -131d |
| RHD4CZ7C02MV3300 | Testing of Medium Voltage Cables 3Cx 500 mm² - (RD-C-2)-Z7-C02-MV | 2027-08-11 → 2027-08-09 (-2d) | 2027-08-29 → 2027-08-25 (-4d) | -133.02d → -131d |
| RHD4CZ7C02MV3400 | Termination of Medium Voltage Cables 3Cx 500 mm² - (RD-C-2)-Z7-C02-MV | 2027-08-29 → 2027-08-26 (-3d) | 2027-08-31 → 2027-08-28 (-3d) | -133.02d → -131d |
| 6144 | **RHD4-02-002-C02-(MV)-Medium Voltage cables 3Cx 50 mm²** | 2027-08-29 → 2027-08-26 (-3d) | 2027-08-31 → 2027-08-28 (-3d) |  |
| RHD4CZ7C02MV3401 | Termination of Medium Voltage Cables 3Cx 50 mm² - (RD-C-2)-Z7-C02-MV | 2027-08-29 → 2027-08-26 (-3d) | 2027-08-31 → 2027-08-28 (-3d) | -133.02d → -131d |
| 6147 | **RHD4-02-002-Z7-C02-Low Voltage Network - LV** | 2027-07-21 → 2027-07-19 (-2d) | 2027-09-27 → 2027-09-22 (-5d) |  |
| 6148 | **RHD4-02-002-C02-(LV)-Low Voltage duct banks** | 2027-07-21 → 2027-07-19 (-2d) | 2027-08-10 → 2027-08-07 (-3d) |  |
| RHD4CZ7C02LV2100 | Excavation of Duct Banks for Low Voltage Network - (RD-C-2)-Z7-C02-LV | 2027-07-21 → 2027-07-19 (-2d) | 2027-07-26 → 2027-07-22 (-4d) | -147.02d → -145d |
| RHD4CZ7C02LV2200 | Installation of Duct Banks for Low Voltage Network - (RD-C-2)-Z7-C02-LV | 2027-07-26 → 2027-07-24 (-2d) | 2027-08-02 → 2027-07-29 (-4d) | -146.02d → -144d |
| RHD4CZ7C02LV2300 | Pouring of Duct Banks for Low Voltage Network - (RD-C-2)-Z7-C02-LV | 2027-08-02 → 2027-07-31 (-2d) | 2027-08-07 → 2027-08-03 (-4d) | -140.02d → -138d |
| RHD4CZ7C02LV2400 | Backfilling of Duct Banks for Low Voltage Network - (RD-C-2)-Z7-C02-LV | 2027-08-07 → 2027-08-04 (-3d) | 2027-08-10 → 2027-08-07 (-3d) | -115.02d → -113d |
| 6149 | **RHD4-02-002-C02-(LV)-Low Voltage Drawpit** | 2027-08-31 → 2027-08-29 (-2d) | 2027-09-05 → 2027-09-01 (-4d) |  |
| RHD4CZ7C02LV5100 | Excavation of Drawpit size 900x900x1000mm for Low Voltage Network - (RD-C-2)-Z7-C02-LV | 2027-08-31 → 2027-08-29 (-2d) | 2027-09-02 → 2027-08-30 (-3d) | -133.02d → -131d |
| RHD4CZ7C02LV5200 | Installation of Drawpit size 900x900x1000mm for Low Voltage Network - (RD-C-2)-Z7-C02-LV | 2027-09-02 → 2027-08-31 (-2d) | 2027-09-05 → 2027-09-01 (-4d) | -133.02d → -131d |
| 6150 | **RHD4-02-002-C02-(LV)-Low Voltage cables** | 2027-09-05 → 2027-09-02 (-3d) | 2027-09-27 → 2027-09-22 (-5d) |  |
| RHD4CZ7C02LV3100 | Excavation for Low Voltage Cables for Low Voltage Network - (RD-C-2)-Z7-C02-LV | 2027-09-05 → 2027-09-02 (-3d) | 2027-09-11 → 2027-09-07 (-4d) | -133.02d → -131d |
| RHD4CZ7C02LV3200 | Cable Laying of Low Voltage Cables for Low Voltage Network - (RD-C-2)-Z7-C02-LV | 2027-09-11 → 2027-09-08 (-3d) | 2027-09-16 → 2027-09-13 (-3d) | -133.02d → -131d |
| RHD4CZ7C02LV3300 | Warning tape and Backfill for Low Voltage Cables for Low Voltage Network - (RD-C-2)-Z7-C02-LV | 2027-09-16 → 2027-09-14 (-2d) | 2027-09-22 → 2027-09-19 (-3d) | -133.02d → -131d |
| RHD4CZ7C02LV3400 | Testing of Low Voltage Cables for Low Voltage Network - (RD-C-2)-Z7-C02-LV | 2027-09-22 → 2027-09-20 (-2d) | 2027-09-27 → 2027-09-22 (-5d) | -133.02d → -131d |
| 6153 | **RHD4-02-002-Z7-C02-Street Lighting Network - SL** | 2027-07-26 → 2027-07-24 (-2d) | 2027-12-19 → 2027-12-22 (+3d) |  |
| 6154 | **RHD4-02-002-C02-(SL)-Street Lighting duct banks** | 2027-07-26 → 2027-07-24 (-2d) | 2027-08-29 → 2027-08-25 (-4d) |  |
| RHD4CZ7C02SL2100 | Excavation of Duct Banks for Street Lighting Network - (RD-C-2)-Z7-C02-SL | 2027-07-26 → 2027-07-24 (-2d) | 2027-08-03 → 2027-07-31 (-3d) | -147.02d → -145d |
| RHD4CZ7C02SL2200 | Installation of Duct Banks for Street Lighting Network - (RD-C-2)-Z7-C02-SL | 2027-08-03 → 2027-08-01 (-2d) | 2027-08-15 → 2027-08-11 (-4d) | -147.02d → -145d |
| RHD4CZ7C02SL2300 | Pouring of Duct Banks for Street Lighting Network - (RD-C-2)-Z7-C02-SL | 2027-08-15 → 2027-08-12 (-3d) | 2027-08-23 → 2027-08-19 (-4d) | -147.02d → -145d |
| RHD4CZ7C02SL2400 | Backfilling of Duct Banks for Street Lighting Network - (RD-C-2)-Z7-C02-SL | 2027-08-23 → 2027-08-21 (-2d) | 2027-08-29 → 2027-08-25 (-4d) | -147.02d → -145d |
| 6155 | **RHD4-02-002-C02-(SL)-Street Lighting Drawpit** | 2027-10-20 → 2027-10-24 (+4d) | 2027-10-25 → 2027-10-28 (+3d) |  |
| RHD4CZ7C02SL5100 | Excavation of Drawpit size 600x600x900mm for Street Lighting Network - (RD-C-2)-Z7-C02-SL | 2027-10-20 → 2027-10-24 (+4d) | 2027-10-21 → 2027-10-25 (+4d) | -153d → -156d |
| RHD4CZ7C02SL5200 | Installation of Drawpit size 600x600x900mm for Street Lighting Network - (RD-C-2)-Z7-C02-SL | 2027-10-24 → 2027-10-27 (+3d) | 2027-10-25 → 2027-10-28 (+3d) | -154d → -157d |
| 6156 | **RHD4-02-002-C02-(SL)-Street Lighting cables** | 2027-10-26 → 2027-10-30 (+4d) | 2027-11-24 → 2027-11-28 (+4d) |  |
| RHD4CZ7C02SL3100 | Excavation for Street Lighting Cables for Street Lighting Network - (RD-C-2)-Z7-C02-SL | 2027-10-26 → 2027-10-30 (+4d) | 2027-11-03 → 2027-11-07 (+4d) | -154d → -157d |
| RHD4CZ7C02SL3200 | Cable Laying of Street Lighting Cables for Street Lighting Network - (RD-C-2)-Z7-C02-SL | 2027-11-04 → 2027-11-08 (+4d) | 2027-11-11 → 2027-11-15 (+4d) | -154d → -157d |
| RHD4CZ7C02SL3300 | Warning tape and Backfill for Street Lighting Cables for Street Lighting Network - (RD-C-2)-Z7-C02-SL | 2027-11-13 → 2027-11-16 (+3d) | 2027-11-20 → 2027-11-23 (+3d) | -154d → -157d |
| RHD4CZ7C02SL3400 | Testing of Street Lighting Cables for Street Lighting Network - (RD-C-2)-Z7-C02-SL | 2027-11-21 → 2027-11-24 (+3d) | 2027-11-24 → 2027-11-28 (+4d) | -154d → -157d |
| 6157 | **RHD4-02-002-C02-(SL)-Street Lighting Poles** | 2027-11-25 → 2027-11-29 (+4d) | 2027-12-09 → 2027-12-13 (+4d) |  |

| ID | Task | Start | Finish | Total float |
| --- | --- | --- | --- | --- |
| RHD4CZ7C02SL1100 | Excavation for RC Base for Lighting Poles for Street Lighting Network - (RD-C-2)-Z7-C02-SL | 2027-11-25 → 2027-11-29 (+4d) | 2027-11-27 → 2027-11-30 (+3d) | -154d → -157d |
| RHD4CZ7C02SL1200 | Installation for RC Base for Lighting Poles for Street Lighting Network - (RD-C-2)-Z7-C02-SL | 2027-11-28 → 2027-12-01 (+3d) | 2027-11-29 → 2027-12-02 (+3d) | -154d → -157d |
| RHD4CZ7C02SL1300 | Backfill for RC Base for Lighting Poles for Street Lighting Network - (RD-C-2)-Z7-C02-SL | 2027-11-30 → 2027-12-04 (+4d) | 2027-12-01 → 2027-12-05 (+4d) | -154d → -157d |
| RHD4CZ7C02SL1400 | Installation for Lighting Poles for Street Lighting Network - (RD-C-2)-Z7-C02-SL | 2027-12-02 → 2027-12-06 (+4d) | 2027-12-05 → 2027-12-08 (+3d) | -154d → -157d |
| RHD4CZ7C02SL1500 | Luminaire Installation for Lighting Poles for Street Lighting Network - (RD-C-2)-Z7-C02-SL | 2027-12-06 → 2027-12-09 (+3d) | 2027-12-09 → 2027-12-13 (+4d) | -154d → -157d |
| 6158 | **RHD4-02-002-C02-(SL)-Street Lighting Feeder Pillars** | 2027-12-11 → 2027-12-14 (+3d) | 2027-12-16 → 2027-12-20 (+4d) |  |
| RHD4CZ7C02SL4100 | Leveling for Distribution Pillars for Street Lighting Network - (RD-C-2)-Z7-C02-SL | 2027-12-11 → 2027-12-14 (+3d) | 2027-12-12 → 2027-12-15 (+3d) | -149d → -152d |
| RHD4CZ7C02SL4200 | Lean Concrete for Distribution Pillars for Street Lighting Network - (RD-C-2)-Z7-C02-SL | 2027-12-13 → 2027-12-16 (+3d) | 2027-12-14 → 2027-12-18 (+4d) | -149d → -152d |
| RHD4CZ7C02SL4300 | Installation of Distribution Pillars for Street Lighting Network - (RD-C-2)-Z7-C02-SL | 2027-12-15 → 2027-12-19 (+4d) | 2027-12-16 → 2027-12-20 (+4d) | -149d → -152d |
| 6159 | **RHD4-02-002-C02-(SL)-Street Lighting Earthing System** | 2027-12-18 → 2027-12-21 (+3d) | 2027-12-19 → 2027-12-22 (+3d) |  |
| RHD4CZ7C02SL6100 | Installation of Earthing for Lighting Poles and Fedder Pillers for Street Lighting Network - (RD-C-2)-Z7-C02-SL | 2027-12-18 → 2027-12-21 (+3d) | 2027-12-19 → 2027-12-22 (+3d) | -149d → -152d |
| 6165 | **RHD4-02-002-Z7-C02-Telecommunications Network - TC** | 2027-02-14 → 2027-02-10 (-4d) | 2028-01-25 → 2028-01-29 (+4d) |  |
| 6166 | **RHD4-02-002-C02-(TC)-Telecommunications Ducts** | 2027-12-20 → 2027-12-23 (+3d) | 2028-01-16 → 2028-01-19 (+3d) |  |
| RHD4CZ7C02TC2100 | Excavation of HDPE Ducts for Telecom Network - (RD-C-2)-Z7-C02-TC | 2027-12-20 → 2027-12-23 (+3d) | 2027-12-27 → 2027-12-30 (+3d) | -149d → -152d |
| RHD4CZ7C02TC2200 | Installation of HDPE Ducts for Telecom Network - (RD-C-2)-Z7-C02-TC | 2027-12-28 → 2028-01-01 (+4d) | 2028-01-08 → 2028-01-11 (+3d) | -149d → -152d |
| RHD4CZ7C02TC2400 | Backfilling of HDPE Ducts for Telecom Network - (RD-C-2)-Z7-C02-TC | 2028-01-09 → 2028-01-12 (+3d) | 2028-01-16 → 2028-01-19 (+3d) | -149d → -152d |
| 6167 | **RHD4-02-002-C02-(TC)-Telecommunications Manholes** | 2028-01-17 → 2028-01-20 (+3d) | 2028-01-25 → 2028-01-29 (+4d) |  |
| RHD4CZ7C02TC5100 | Excavation for Manholes for Telecom Network - (RD-C-2)-Z7-C02-TC | 2028-01-17 → 2028-01-20 (+3d) | 2028-01-20 → 2028-01-24 (+4d) | -149d → -152d |
| RHD4CZ7C02TC5200 | Installation of Manholes for Telecom Network - (RD-C-2)-Z7-C02-TC | 2028-01-22 → 2028-01-25 (+3d) | 2028-01-25 → 2028-01-29 (+4d) | -149d → -152d |
| 6168 | **RHD4-02-002-C02-(TC)-Telecomminications Road Crossings** | 2027-02-14 → 2027-02-10 (-4d) | 2027-03-03 → 2027-02-27 (-4d) |  |
| RHD4CZ7C02TC3100 | Excavation for Road Crossings for Telecom Network - (RD-C-2)-Z7-C02-TC | 2027-02-14 → 2027-02-10 (-4d) | 2027-02-17 → 2027-02-13 (-4d) | -197.02d → -194d |
| RHD4CZ7C02TC3200 | Installation of Road Crossings for Telecom Network - (RD-C-2)-Z7-C02-TC | 2027-02-17 → 2027-02-14 (-3d) | 2027-02-23 → 2027-02-17 (-6d) | -197.02d → -194d |
| RHD4CZ7C02TC3300 | Pouring of Road Crossings for Telecom Network - (RD-C-2)-Z7-C02-TC | 2027-02-23 → 2027-02-18 (-5d) | 2027-02-28 → 2027-02-23 (-5d) | -197.02d → -194d |
| RHD4CZ7C02TC3400 | Backfilling of Road Crossings for Telecom Network - (RD-C-2)-Z7-C02-TC | 2027-02-28 → 2027-02-24 (-4d) | 2027-03-03 → 2027-02-27 (-4d) | -197.02d → -194d |
| 6169 | **RHD4-02-002-Z7-C02-Information and Communication Technologies - ICT** | 2027-02-14 → 2027-02-10 (-4d) | 2028-02-23 → 2028-03-01 (+7d) |  |
| 6170 | **RHD4-02-002-C02-(ICT)-Information and Communication Technologies Ducts** | 2028-01-26 → 2028-01-30 (+4d) | 2028-02-23 → 2028-03-01 (+7d) |  |
| RHD4CZ7C02ICT2100 | Excavation of HDPE Ducts for ICT Network - (RD-C-2)-Z7-C02-ICT | 2028-01-26 → 2028-01-30 (+4d) | 2028-02-02 → 2028-02-06 (+4d) | -149d → -152d |
| RHD4CZ7C02ICT2200 | Installation of HDPE Ducts for ICT Network - (RD-C-2)-Z7-C02-ICT | 2028-02-03 → 2028-02-07 (+4d) | 2028-02-14 → 2028-02-17 (+3d) | -149d → -152d |
| RHD4CZ7C02ICT2400 | Backfilling of HDPE Ducts for ICT Network - (RD-C-2)-Z7-C02-ICT | 2028-02-15 → 2028-02-19 (+4d) | 2028-02-23 → 2028-03-01 (+7d) | -149d → -152d |
| 6171 | **RHD4-02-002-C02-(ICT)-Information and Communication Technologies Manholes** | 2028-02-03 → 2028-02-07 (+4d) | 2028-02-12 → 2028-02-15 (+3d) |  |
| RHD4CZ7C02ICT5100 | Excavation for Manholes for ICT Network - (RD-C-2)-Z7-C02-ICT | 2028-02-03 → 2028-02-07 (+4d) | 2028-02-07 → 2028-02-10 (+3d) | -147d → -150d |
| RHD4CZ7C02ICT5200 | Installation of Manholes for ICT Network - (RD-C-2)-Z7-C02-ICT | 2028-02-08 → 2028-02-12 (+4d) | 2028-02-12 → 2028-02-15 (+3d) | -147d → -150d |
| 6172 | **RHD4-02-002-C02-(ICT)-Information and Communication Technologies Road Crossings** | 2027-02-14 → 2027-02-10 (-4d) | 2027-03-03 → 2027-02-27 (-4d) |  |
| RHD4CZ7C02ICT3100 | Excavation for Road Crossings for ICT Network - (RD-C-2)-Z7-C02-ICT | 2027-02-14 → 2027-02-10 (-4d) | 2027-02-17 → 2027-02-13 (-4d) | -197.02d → -194d |
| RHD4CZ7C02ICT3200 | Installation of Road Crossings for ICT Network - (RD-C-2)-Z7-C02-ICT | 2027-02-17 → 2027-02-14 (-3d) | 2027-02-23 → 2027-02-17 (-6d) | -197.02d → -194d |
| RHD4CZ7C02ICT3300 | Pouring of Road Crossings for ICT Network - (RD-C-2)-Z7-C02-ICT | 2027-02-23 → 2027-02-18 (-5d) | 2027-02-28 → 2027-02-23 (-5d) | -197.02d → -194d |
| RHD4CZ7C02ICT3400 | Backfilling of Road Crossings for ICT Network - (RD-C-2)-Z7-C02-ICT | 2027-02-28 → 2027-02-24 (-4d) | 2027-03-03 → 2027-02-27 (-4d) | -197.02d → -194d |
| 6173 | **RHD4-02-002-Z7-C02-Security Network - CCTV** | 2028-02-24 → 2028-03-02 (+7d) | 2028-04-05 → 2028-04-09 (+4d) |  |
| 6174 | **RHD4-02-002-C02-(CCTV)-Civil Works** | 2028-02-24 → 2028-03-02 (+7d) | 2028-03-08 → 2028-03-12 (+4d) |  |
| RHD4CZ7C02CCTV2100 | Civil Works for Security Network - (RD-C-2)-Z7-C02-CCTV | 2028-02-24 → 2028-03-02 (+7d) | 2028-03-08 → 2028-03-12 (+4d) | -149d → -152d |
| 6175 | **RHD4-02-002-C02-(CCTV)-CCTV Poles** | 2028-03-09 → 2028-03-13 (+4d) | 2028-03-18 → 2028-03-21 (+3d) |  |
| RHD4CZ7C02CCTV1100 | Excavation for RC Base for CCTV Poles for Security Network - (RD-C-2)-Z7-C02-CCTV | 2028-03-09 → 2028-03-13 (+4d) | 2028-03-11 → 2028-03-14 (+3d) | -149d → -152d |
| RHD4CZ7C02CCTV1200 | Installation for RC Base for CCTV Poles for Security Network - (RD-C-2)-Z7-C02-CCTV | 2028-03-12 → 2028-03-15 (+3d) | 2028-03-13 → 2028-03-16 (+3d) | -149d → -152d |
| RHD4CZ7C02CCTV1300 | Backfill for RC Base for CCTV Poles for Security Network - (RD-C-2)-Z7-C02-CCTV | 2028-03-14 → 2028-03-18 (+4d) | 2028-03-15 → 2028-03-19 (+4d) | -149d → -152d |
| RHD4CZ7C02CCTV1400 | Installation for CCTV Poles for Security Network - (RD-C-2)-Z7-C02-CCTV | 2028-03-16 → 2028-03-20 (+4d) | 2028-03-18 → 2028-03-21 (+3d) | -149d → -152d |
| 6176 | **RHD4-02-002-C02-(CCTV)-Camera** | 2028-03-19 → 2028-03-22 (+3d) | 2028-03-20 → 2028-03-23 (+3d) |  |
| RHD4CZ7C02CCTV3100 | Installation for Cameras for Security Network - (RD-C-2)-Z7-C02-CCTV | 2028-03-19 → 2028-03-22 (+3d) | 2028-03-20 → 2028-03-23 (+3d) | -149d → -152d |
| 6177 | **RHD4-02-002-C02-(CCTV)-Power and Infrastructure** | 2028-04-02 → 2028-04-05 (+3d) | 2028-04-05 → 2028-04-09 (+4d) |  |
| RHD4CZ7C02CCTV4100 | Installation of Power outlet, UPS and midspan for PTZ Camerafor Cameras for Security Network - (RD-C-2)-Z7-C02-CCTV | 2028-04-02 → 2028-04-05 (+3d) | 2028-04-03 → 2028-04-06 (+3d) | -149d → -152d |
| RHD4CZ7C02CCTV4200 | Short Range Wireless PoP wireless Bridgefor CCTV Poles for Security Network - (RD-C-2)-Z7-C02-CCTV | 2028-04-04 → 2028-04-08 (+4d) | 2028-04-05 → 2028-04-09 (+4d) | -149d → -152d |
| 6179 | **RHD4-02-002-C02-(CCTV)-CCTV Panels and Components** | 2028-03-21 → 2028-03-25 (+4d) | 2028-04-01 → 2028-04-04 (+3d) |  |
| RHD4CZ7C02CCTV6100 | Installation for CCTV Panels for Security Network - (RD-C-2)-Z7-C02-CCTV | 2028-03-21 → 2028-03-25 (+4d) | 2028-04-01 → 2028-04-04 (+3d) | -149d → -152d |
| 5623 | **RHD4-02-002-Z7-RA03** | 2027-02-02 → 2027-02-03 (+1d) | 2028-03-28 → 2028-03-26 (-2d) |  |
| 5802 | **RHD4-02-002-Z7-RA03-Road Works - RD** | 2027-03-03 → 2027-02-28 (-3d) | 2028-03-28 → 2028-03-26 (-2d) |  |
| 5803 | **RHD4-02-002-RA03-(RD)-Subgrade** | 2027-03-03 → 2027-02-28 (-3d) | 2027-03-14 → 2027-03-06 (-8d) |  |
| RHD4CZ7RA03RD1100 | Supply, lay and compaction subgrade compacted thickness 300 mm for Roads - (ROUND-03)-Z7-RA03-RD | 2027-03-03 → 2027-02-28 (-3d) | 2027-03-14 → 2027-03-06 (-8d) | -172.02d → -169d |
| 5804 | **RHD4-02-002-RA03-(RD)-Aggregate Base Course** | 2027-03-14 → 2027-03-07 (-7d) | 2027-03-20 → 2027-03-15 (-5d) |  |
| RHD4CZ7RA03RD2100 | Supply, lay and compaction Aggregate base course compacted thickness 300 mmfor Roads - (ROUND-03)-Z7-RA03-RD | 2027-03-14 → 2027-03-07 (-7d) | 2027-03-20 → 2027-03-15 (-5d) | 8.98d → 12d |
| 5805 | **RHD4-02-002-RA03-(RD)-Bituminous base course Two Layers, including (MC1)&(RC2)** | 2027-03-20 → 2027-03-16 (-4d) | 2028-01-25 → 2028-01-22 (-3d) |  |
| RHD4CZ7RA03RD3100 | Supply, lay and Asphaltic base course including Prime Coat (MC1) for 1st Layer - (ROUND-03)-Z7-RA03-RD | 2027-03-20 → 2027-03-16 (-4d) | 2027-03-23 → 2027-03-18 (-5d) | 8.98d → 12d |
| RHD4CZ7RA03RD3200 | Supply, lay and Asphaltic base course including Tack Coat (RC2) for 2nd Layer - (ROUND-03)-Z7-RA03-RD | 2028-01-22 → 2028-01-19 (-3d) | 2028-01-25 → 2028-01-22 (-3d) | -99.02d → -97d |
| 5807 | **RHD4-02-002-RA03-(RD)-Precast Concrete Curb** | 2028-01-25 → 2028-01-23 (-2d) | 2028-01-31 → 2028-01-27 (-4d) |  |
| RHD4CZ7RA03RD5100 | Supply and installation Precast Concrete Kerb for Roads - (ROUND-03)-Z7-RA03-RD | 2028-01-25 → 2028-01-23 (-2d) | 2028-01-31 → 2028-01-27 (-4d) | -99.02d → -97d |
| 5810 | **RHD4-02-002-RA03-(RD)-Traffic Signage** | 2028-01-31 → 2028-01-29 (-2d) | 2028-02-12 → 2028-02-08 (-4d) |  |
| RHD4CZ7RA03RD8100 | Installation of Traffic Signage for Road Network - (ROUND-03)-Z7-RA03-RD | 2028-01-31 → 2028-01-29 (-2d) | 2028-02-12 → 2028-02-08 (-4d) | -99.02d → -97d |
| 5806 | **RHD4-02-002-RA03-(RD)-Bituminous concrete wearing course including tack coat (RC2)** | 2028-02-12 → 2028-02-09 (-3d) | 2028-02-14 → 2028-02-10 (-4d) |  |
| RHD4CZ7RA03RD4100 | Supply, lay and compaction Asphaltic wearing course including tack Coat (RC2)for Road Network - (ROUND-03)-Z7-RA03-RD | 2028-02-12 → 2028-02-09 (-3d) | 2028-02-14 → 2028-02-10 (-4d) | -99.02d → -97d |
| 5811 | **RHD4-02-002-RA03-(RD)-Speed Table and Wheel Stopper** | 2028-02-14 → 2028-02-12 (-2d) | 2028-03-04 → 2028-02-26 (-7d) |  |
| RHD4CZ7RA03RD9100 | Installation for Speed Bump for Road Network - (ROUND-03)-Z7-RA03-RD | 2028-02-14 → 2028-02-12 (-2d) | 2028-03-04 → 2028-02-26 (-7d) | -99.02d → -97d |
| 5809 | **RHD4-02-002-RA03-(RD)-Pavement Marking** | 2028-03-22 → 2028-03-21 (-1d) | 2028-03-28 → 2028-03-26 (-2d) |  |

| ID | Task | Start | Finish | Total float |
| --- | --- | --- | --- | --- |
| RHD4CZ7RA03RD7100 | Pavement Markings for Road Network - (ROUND-03)-Z7-RA03-RD | 2028-03-22 → 2028-03-21 (-1d) | 2028-03-28 → 2028-03-26 (-2d) | -115.02d → -114d |
| 5762 | **RHD4-02-002-Z7-RA03-Medium Voltage Network - MV** | 2027-03-23 → 2027-03-20 (-3d) | 2027-05-03 → 2027-05-10 (+7d) |  |
| 5766 | **RHD4-02-002-RA03-(MV)-Medium Voltage cables 3Cx 50 mm²** | 2027-03-23 → 2027-03-20 (-3d) | 2027-03-28 → 2027-03-23 (-5d) |  |
| RHD4CZ7RA03MV3101 | Installation of Medium Voltage Cables 3Cx 50 mm² - (ROUND-03)-Z7-RA03-MV | 2027-03-23 → 2027-03-20 (-3d) | 2027-03-25 → 2027-03-21 (-4d) | 8.98d → 12d |
| RHD4CZ7RA03MV3301 | Testing of Medium Voltage Cables 3Cx 50 mm² - (ROUND-03)-Z7-RA03-MV | 2027-03-25 → 2027-03-22 (-3d) | 2027-03-28 → 2027-03-23 (-5d) | 8.98d → 12d |
| 5768 | **RHD4-02-002-RA03-(MV)-Unit Substations** | 2027-03-28 → 2027-03-24 (-4d) | 2027-05-03 → 2027-05-10 (+7d) |  |
| RHD4CZ7RA03MV5100 | Excavation for Unit Substations for Medium Voltage Network - (ROUND-03)-Z7-RA03-MV | 2027-03-28 → 2027-03-24 (-4d) | 2027-03-30 → 2027-03-25 (-5d) | 8.98d → 12d |
| RHD4CZ7RA03MV5200 | Concrete Base Placement for Unit Substations for Medium Voltage Network - (ROUND-03)-Z7-RA03-MV | 2027-03-30 → 2027-03-27 (-3d) | 2027-04-01 → 2027-03-28 (-4d) | 8.98d → 12d |
| RHD4CZ7RA03MV5300 | Installation for Fences and doors for Medium Voltage Network - (ROUND-03)-Z7-RA03-MV | 2027-04-01 → 2027-03-29 (-3d) | 2027-04-07 → 2027-04-03 (-4d) | 8.98d → 12d |
| RHD4CZ7RA03MV5400 | Installation for Unit Substations for Medium Voltage Network - (ROUND-03)-Z7-RA03-MV | 2027-04-29 → 2027-05-06 (+7d) | 2027-05-03 → 2027-05-10 (+7d) | -10d → -16d |
| 5769 | **RHD4-02-002-Z7-RA03-Low Voltage Network - LV** | 2027-11-29 → 2027-11-27 (-2d) | 2027-12-15 → 2027-12-12 (-3d) |  |
| 5772 | **RHD4-02-002-RA03-(LV)-Low Voltage cables** | 2027-11-29 → 2027-11-27 (-2d) | 2027-12-08 → 2027-12-05 (-3d) |  |
| RHD4CZ7RA03LV3100 | Excavation for Low Voltage Cables for Low Voltage Network - (ROUND-03)-Z7-RA03-LV | 2027-11-29 → 2027-11-27 (-2d) | 2027-12-01 → 2027-11-28 (-3d) | -184.02d → -182d |
| RHD4CZ7RA03LV3200 | Cable Laying of Low Voltage Cables for Low Voltage Network - (ROUND-03)-Z7-RA03-LV | 2027-12-01 → 2027-11-29 (-2d) | 2027-12-04 → 2027-11-30 (-4d) | -184.02d → -182d |
| RHD4CZ7RA03LV3300 | Warning tape and Backfill for Low Voltage Cables for Low Voltage Network - (ROUND-03)-Z7-RA03-LV | 2027-12-04 → 2027-12-01 (-3d) | 2027-12-06 → 2027-12-02 (-4d) | -184.02d → -182d |
| RHD4CZ7RA03LV3400 | Testing of Low Voltage Cables for Low Voltage Network - (ROUND-03)-Z7-RA03-LV | 2027-12-06 → 2027-12-04 (-2d) | 2027-12-08 → 2027-12-05 (-3d) | -184.02d → -182d |
| 5773 | **RHD4-02-002-RA03-(LV)-Low Voltage Distribution Pillars** | 2027-12-08 → 2027-12-06 (-2d) | 2027-12-15 → 2027-12-12 (-3d) |  |
| RHD4CZ7RA03LV4100 | Leveling for Distribution Pillars for Low Voltage Network - (ROUND-03)-Z7-RA03-LV | 2027-12-08 → 2027-12-06 (-2d) | 2027-12-11 → 2027-12-07 (-4d) | -184.02d → -182d |
| RHD4CZ7RA03LV4200 | Lean Concrete for Distribution Pillars for Low Voltage Network - (ROUND-03)-Z7-RA03-LV | 2027-12-11 → 2027-12-08 (-3d) | 2027-12-13 → 2027-12-09 (-4d) | -184.02d → -182d |
| RHD4CZ7RA03LV4300 | Installation of Distribution Pillars for Low Voltage Network - (ROUND-03)-Z7-RA03-LV | 2027-12-13 → 2027-12-11 (-2d) | 2027-12-15 → 2027-12-12 (-3d) | -184.02d → -182d |
| 5775 | **RHD4-02-002-Z7-RA03-Street Lighting Network - SL** | 2027-08-29 → 2027-08-26 (-3d) | 2027-10-23 → 2027-10-19 (-4d) |  |
| 5776 | **RHD4-02-002-RA03-(SL)-Street Lighting duct banks** | 2027-08-29 → 2027-08-26 (-3d) | 2027-09-16 → 2027-09-13 (-3d) |  |
| RHD4CZ7RA03SL2100 | Excavation of Duct Banks for Street Lighting Network - (ROUND-03)-Z7-RA03-SL | 2027-08-29 → 2027-08-26 (-3d) | 2027-09-02 → 2027-08-30 (-3d) | -147.02d → -145d |
| RHD4CZ7RA03SL2200 | Installation of Duct Banks for Street Lighting Network - (ROUND-03)-Z7-RA03-SL | 2027-09-02 → 2027-08-31 (-2d) | 2027-09-08 → 2027-09-05 (-3d) | -147.02d → -145d |
| RHD4CZ7RA03SL2300 | Pouring of Duct Banks for Street Lighting Network - (ROUND-03)-Z7-RA03-SL | 2027-09-08 → 2027-09-06 (-2d) | 2027-09-13 → 2027-09-09 (-4d) | -147.02d → -145d |
| RHD4CZ7RA03SL2400 | Backfilling of Duct Banks for Street Lighting Network - (ROUND-03)-Z7-RA03-SL | 2027-09-13 → 2027-09-11 (-2d) | 2027-09-16 → 2027-09-13 (-3d) | -147.02d → -145d |
| 5777 | **RHD4-02-002-RA03-(SL)-Street Lighting Drawpit** | 2027-09-16 → 2027-09-14 (-2d) | 2027-09-21 → 2027-09-18 (-3d) |  |
| RHD4CZ7RA03SL5100 | Excavation of Drawpit size 600x600x900mm for Street Lighting Network - (ROUND-03)-Z7-RA03-SL | 2027-09-16 → 2027-09-14 (-2d) | 2027-09-19 → 2027-09-15 (-4d) | -147.02d → -145d |
| RHD4CZ7RA03SL5200 | Installation of Drawpit size 600x600x900mm for Street Lighting Network - (ROUND-03)-Z7-RA03-SL | 2027-09-19 → 2027-09-16 (-3d) | 2027-09-21 → 2027-09-18 (-3d) | -147.02d → -145d |
| 5778 | **RHD4-02-002-RA03-(SL)-Street Lighting cables** | 2027-09-21 → 2027-09-19 (-2d) | 2027-10-02 → 2027-09-28 (-4d) |  |
| RHD4CZ7RA03SL3100 | Excavation for Street Lighting Cables for Street Lighting Network - (ROUND-03)-Z7-RA03-SL | 2027-09-21 → 2027-09-19 (-2d) | 2027-09-25 → 2027-09-20 (-5d) | -147.02d → -145d |
| RHD4CZ7RA03SL3200 | Cable Laying of Street Lighting Cables for Street Lighting Network - (ROUND-03)-Z7-RA03-SL | 2027-09-25 → 2027-09-21 (-4d) | 2027-09-27 → 2027-09-22 (-5d) | -147.02d → -145d |
| RHD4CZ7RA03SL3300 | Warning tape and Backfill for Street Lighting Cables for Street Lighting Network - (ROUND-03)-Z7-RA03-SL | 2027-09-27 → 2027-09-25 (-2d) | 2027-09-29 → 2027-09-26 (-3d) | -147.02d → -145d |
| RHD4CZ7RA03SL3400 | Testing of Street Lighting Cables for Street Lighting Network - (ROUND-03)-Z7-RA03-SL | 2027-09-29 → 2027-09-27 (-2d) | 2027-10-02 → 2027-09-28 (-4d) | -147.02d → -145d |
| 5779 | **RHD4-02-002-RA03-(SL)-Street Lighting Poles** | 2027-10-02 → 2027-09-29 (-3d) | 2027-10-13 → 2027-10-10 (-3d) |  |
| RHD4CZ7RA03SL1100 | Excavation for RC Base for Lighting Poles for Street Lighting Network - (ROUND-03)-Z7-RA03-SL | 2027-10-02 → 2027-09-29 (-3d) | 2027-10-04 → 2027-09-30 (-4d) | -147.02d → -145d |
| RHD4CZ7RA03SL1200 | Installation for RC Base for Lighting Poles for Street Lighting Network - (ROUND-03)-Z7-RA03-SL | 2027-10-04 → 2027-10-02 (-2d) | 2027-10-06 → 2027-10-03 (-3d) | -147.02d → -145d |
| RHD4CZ7RA03SL1300 | Backfill for RC Base for Lighting Poles for Street Lighting Network - (ROUND-03)-Z7-RA03-SL | 2027-10-06 → 2027-10-04 (-2d) | 2027-10-09 → 2027-10-05 (-4d) | -147.02d → -145d |
| RHD4CZ7RA03SL1400 | Installation for Lighting Poles for Street Lighting Network - (ROUND-03)-Z7-RA03-SL | 2027-10-09 → 2027-10-06 (-3d) | 2027-10-11 → 2027-10-07 (-4d) | -147.02d → -145d |
| RHD4CZ7RA03SL1500 | Luminaire Installation for Lighting Poles for Street Lighting Network - (ROUND-03)-Z7-RA03-SL | 2027-10-11 → 2027-10-09 (-2d) | 2027-10-13 → 2027-10-10 (-3d) | -147.02d → -145d |
| 5780 | **RHD4-02-002-RA03-(SL)-Street Lighting Feeder Pillars** | 2027-10-13 → 2027-10-11 (-2d) | 2027-10-20 → 2027-10-17 (-3d) |  |
| RHD4CZ7RA03SL4100 | Leveling for Distribution Pillars for Street Lighting Network - (ROUND-03)-Z7-RA03-SL | 2027-10-13 → 2027-10-11 (-2d) | 2027-10-16 → 2027-10-12 (-4d) | -147.02d → -145d |
| RHD4CZ7RA03SL4200 | Lean Concrete for Distribution Pillars for Street Lighting Network - (ROUND-03)-Z7-RA03-SL | 2027-10-16 → 2027-10-13 (-3d) | 2027-10-18 → 2027-10-14 (-4d) | -147.02d → -145d |
| RHD4CZ7RA03SL4300 | Installation of Distribution Pillars for Street Lighting Network - (ROUND-03)-Z7-RA03-SL | 2027-10-18 → 2027-10-16 (-2d) | 2027-10-20 → 2027-10-17 (-3d) | -147.02d → -145d |
| 5781 | **RHD4-02-002-RA03-(SL)-Street Lighting Earthing System** | 2027-10-20 → 2027-10-18 (-2d) | 2027-10-23 → 2027-10-19 (-4d) |  |
| RHD4CZ7RA03SL6100 | Installation of Earthing for Lighting Poles and Fedder Pillers for Street Lighting Network - (ROUND-03)-Z7-RA03-SL | 2027-10-20 → 2027-10-18 (-2d) | 2027-10-23 → 2027-10-19 (-4d) | -147.02d → -145d |
| 489 | **RHD4-02-002-Z7-RA03-Telecommunications Network - TC** | 2027-02-02 → 2027-02-03 (+1d) | 2027-11-08 → 2027-11-06 (-2d) |  |
| 490 | **RHD4-02-002-C081-(TC)-Telecommunications Ducts** | 2027-10-23 → 2027-10-20 (-3d) | 2027-11-08 → 2027-11-06 (-2d) |  |
| RHD4CZ7RA03TC2100 | Excavation of HDPE Ducts for Telecom Network - (ROUND-03)-Z7-RA03-TC | 2027-10-23 → 2027-10-20 (-3d) | 2027-10-26 → 2027-10-23 (-3d) | -147.02d → -145d |
| RHD4CZ7RA03TC2200 | Installation of HDPE Ducts for Telecom Network - (ROUND-03)-Z7-RA03-TC | 2027-10-26 → 2027-10-24 (-2d) | 2027-11-01 → 2027-10-30 (-2d) | -144.03d → -142.01d |
| RHD4CZ7RA03TC2400 | Backfilling of HDPE Ducts for Telecom Network - (ROUND-03)-Z7-RA03-TC | 2027-11-04 → 2027-11-02 (-2d) | 2027-11-08 → 2027-11-06 (-2d) | -147.02d → -145d |
| 491 | **RHD4-02-002-C081-(TC)-Telecommunications Manholes** | 2027-10-26 → 2027-10-24 (-2d) | 2027-11-04 → 2027-11-01 (-3d) |  |
| RHD4CZ7RA03TC5100 | Excavation for Manholes for Telecom Network - (ROUND-03)-Z7-RA03-TC | 2027-10-26 → 2027-10-24 (-2d) | 2027-10-31 → 2027-10-27 (-4d) | -147.02d → -145d |
| RHD4CZ7RA03TC5200 | Installation of Manholes for Telecom Network - (ROUND-03)-Z7-RA03-TC | 2027-10-31 → 2027-10-28 (-3d) | 2027-11-04 → 2027-11-01 (-3d) | -147.02d → -145d |
| 5411 | **RHD4-02-002-C081-(TC)-Telecomminications Road Crossings** | 2027-02-02 → 2027-02-03 (+1d) | 2027-02-11 → 2027-02-13 (+2d) |  |
| RHD4CZ7RA03TC3100 | Excavation for Road Crossings for Telecom Network - (ROUND-03)-Z7-RA03-TC | 2027-02-02 → 2027-02-03 (+1d) | 2027-02-03 → 2027-02-04 (+1d) | -156.02d → -157.02d |
| RHD4CZ7RA03TC3200 | Installation of Road Crossings for Telecom Network - (ROUND-03)-Z7-RA03-TC | 2027-02-04 → 2027-02-06 (+2d) | 2027-02-07 → 2027-02-08 (+1d) | -156.02d → -157.02d |
| RHD4CZ7RA03TC3300 | Pouring of Road Crossings for Telecom Network - (ROUND-03)-Z7-RA03-TC | 2027-02-07 → 2027-02-08 (+1d) | 2027-02-09 → 2027-02-10 (+1d) | -156.02d → -157.02d |
| RHD4CZ7RA03TC3400 | Backfilling of Road Crossings for Telecom Network - (ROUND-03)-Z7-RA03-TC | 2027-02-09 → 2027-02-10 (+1d) | 2027-02-11 → 2027-02-13 (+2d) | -156.02d → -157.02d |
| 5791 | **RHD4-02-002-Z7-RA03-Information and Communication Technologies - ICT** | 2027-10-23 → 2027-10-20 (-3d) | 2027-11-07 → 2027-11-03 (-4d) |  |
| 5792 | **RHD4-02-002-RA03-(ICT)-Information and Communication Technologies Ducts** | 2027-10-23 → 2027-10-20 (-3d) | 2027-11-07 → 2027-11-03 (-4d) |  |
| RHD4CZ7RA03ICT2100 | Excavation of HDPE Ducts for ICT Network - (ROUND-03)-Z7-RA03-ICT | 2027-10-23 → 2027-10-20 (-3d) | 2027-10-27 → 2027-10-24 (-3d) | -146.02d → -144d |
| RHD4CZ7RA03ICT2200 | Installation of HDPE Ducts for ICT Network - (ROUND-03)-Z7-RA03-ICT | 2027-10-27 → 2027-10-25 (-2d) | 2027-11-02 → 2027-10-30 (-3d) | -146.02d → -144d |
| RHD4CZ7RA03ICT2400 | Backfilling of HDPE Ducts for ICT Network - (ROUND-03)-Z7-RA03-ICT | 2027-11-02 → 2027-10-31 (-2d) | 2027-11-07 → 2027-11-03 (-4d) | -146.02d → -144d |
| 5795 | **RHD4-02-002-Z7-RA03-Security Network - CCTV** | 2027-11-08 → 2027-11-06 (-2d) | 2028-01-22 → 2028-01-18 (-4d) |  |
| 5796 | **RHD4-02-002-RA03-(CCTV)-Civil Works** | 2027-11-08 → 2027-11-06 (-2d) | 2027-11-20 → 2027-11-17 (-3d) |  |
| RHD4CZ7RA03CCTV2100 | Civil Works for Security Network - (ROUND-03)-Z7-RA03-CCTV | 2027-11-08 → 2027-11-06 (-2d) | 2027-11-20 → 2027-11-17 (-3d) | -147.02d → -145d |
| 5797 | **RHD4-02-002-RA03-(CCTV)-CCTV Poles** | 2027-12-29 → 2027-12-27 (-2d) | 2028-01-10 → 2028-01-06 (-4d) |  |
| RHD4CZ7RA03CCTV1100 | Excavation for RC Base for CCTV Poles for Security Network - (ROUND-03)-Z7-RA03-CCTV | 2027-12-29 → 2027-12-27 (-2d) | 2028-01-01 → 2027-12-28 (-4d) | -150.02d → -148d |
| RHD4CZ7RA03CCTV1200 | Installation for RC Base for CCTV Poles for Security Network - (ROUND-03)-Z7-RA03-CCTV | 2028-01-01 → 2027-12-29 (-3d) | 2028-01-03 → 2027-12-30 (-4d) | -150.02d → -148d |

| ID | Task | Start | Finish | Total float |
| --- | --- | --- | --- | --- |
| RHD4CZ7RA03CCTV1300 | Backfill for RC Base for CCTV Poles for Security Network - (ROUND-03)-Z7-RA03-CCTV | 2028-01-03 → 2028-01-01 (-2d) | 2028-01-05 → 2028-01-02 (-3d) | -150.02d → -148d |
| RHD4CZ7RA03CCTV1400 | Installation for CCTV Poles for Security Network - (ROUND-03)-Z7-RA03-CCTV | 2028-01-05 → 2028-01-03 (-2d) | 2028-01-08 → 2028-01-04 (-4d) | -150.02d → -148d |
| RHD4CZ7RA03CCTV1500 | Protection post Installation for CCTV Poles for Security Network - (ROUND-03)-Z7-RA03-CCTV | 2028-01-08 → 2028-01-05 (-3d) | 2028-01-10 → 2028-01-06 (-4d) | -150.02d → -148d |
| 5798 | **RHD4-02-002-RA03-(CCTV)-Camera** | 2028-01-10 → 2028-01-08 (-2d) | 2028-01-12 → 2028-01-09 (-3d) |  |
| RHD4CZ7RA03CCTV3100 | Installation for Cameras for Security Network - (ROUND-03)-Z7-RA03-CCTV | 2028-01-10 → 2028-01-08 (-2d) | 2028-01-12 → 2028-01-09 (-3d) | -99.02d → -97d |
| 5799 | **RHD4-02-002-RA03-(CCTV)-Power and Infrastructure** | 2028-01-08 → 2028-01-05 (-3d) | 2028-01-12 → 2028-01-09 (-3d) |  |
| RHD4CZ7RA03CCTV4100 | Installation of Power outlet, UPS and midspan for PTZ Camerafor Cameras for Security Network - (ROUND-03)-Z7-RA03-CCTV | 2028-01-08 → 2028-01-05 (-3d) | 2028-01-10 → 2028-01-06 (-4d) | -99.02d → -97d |
| RHD4CZ7RA03CCTV4200 | Short Range Wireless PoP wireless Bridgefor CCTV Poles for Security Network - (ROUND-03)-Z7-RA03-CCTV | 2028-01-10 → 2028-01-08 (-2d) | 2028-01-12 → 2028-01-09 (-3d) | -99.02d → -97d |
| 5801 | **RHD4-02-002-RA03-(CCTV)-CCTV Panels and Components** | 2028-01-12 → 2028-01-10 (-2d) | 2028-01-22 → 2028-01-18 (-4d) |  |
| RHD4CZ7RA03CCTV6100 | Installation for CCTV Panels for Security Network - (ROUND-03)-Z7-RA03-CCTV | 2028-01-12 → 2028-01-10 (-2d) | 2028-01-22 → 2028-01-18 (-4d) | -99.02d → -97d |
| 5812 | **RHD4-02-002-Z7-RA05** | 2027-02-14 → 2027-02-10 (-4d) | 2027-12-23 → 2027-12-20 (-3d) |  |
| 5991 | **RHD4-02-002-Z7-RA05-Road Works - RD** | 2027-03-03 → 2027-02-28 (-3d) | 2027-12-23 → 2027-12-20 (-3d) |  |
| 5992 | **RHD4-02-002-RA05-(RD)-Subgrade** | 2027-03-03 → 2027-02-28 (-3d) | 2027-03-13 → 2027-03-04 (-9d) |  |
| RHD4CZ7RA05RD1100 | Supply, lay and compaction subgrade compacted thickness 300 mm for Roads - (ROUND-05)-Z7-RA05-RD | 2027-03-03 → 2027-02-28 (-3d) | 2027-03-13 → 2027-03-04 (-9d) | -172.02d → -169d |
| 5993 | **RHD4-02-002-RA05-(RD)-Aggregate Base Course** | 2027-03-13 → 2027-03-06 (-7d) | 2027-03-17 → 2027-03-13 (-4d) |  |
| RHD4CZ7RA05RD2100 | Supply, lay and compaction Aggregate base course compacted thickness 300 mmfor Roads - (ROUND-05)-Z7-RA05-RD | 2027-03-13 → 2027-03-06 (-7d) | 2027-03-17 → 2027-03-13 (-4d) | -172.02d → -169d |
| 5994 | **RHD4-02-002-RA05-(RD)-Bituminous base course Two Layers, including (MC1)&(RC2)** | 2027-03-17 → 2027-03-14 (-3d) | 2027-12-04 → 2027-11-30 (-4d) |  |
| RHD4CZ7RA05RD3100 | Supply, lay and Asphaltic base course including Prime Coat (MC1) for 1st Layer - (ROUND-05)-Z7-RA05-RD | 2027-03-17 → 2027-03-14 (-3d) | 2027-03-20 → 2027-03-15 (-5d) | -172.02d → -169d |
| RHD4CZ7RA05RD3200 | Supply, lay and Asphaltic base course including Tack Coat (RC2) for 2nd Layer - (ROUND-05)-Z7-RA05-RD | 2027-12-01 → 2027-11-29 (-2d) | 2027-12-04 → 2027-11-30 (-4d) | -155.02d → -153d |
| 5996 | **RHD4-02-002-RA05-(RD)-Precast Concrete Curb** | 2027-12-04 → 2027-12-01 (-3d) | 2027-12-08 → 2027-12-05 (-3d) |  |
| RHD4CZ7RA05RD5100 | Supply and installation Precast Concrete Kerb for Roads - (ROUND-05)-Z7-RA05-RD | 2027-12-04 → 2027-12-01 (-3d) | 2027-12-08 → 2027-12-05 (-3d) | -155.02d → -153d |
| 5999 | **RHD4-02-002-RA05-(RD)-Traffic Signage** | 2027-12-08 → 2027-12-06 (-2d) | 2027-12-19 → 2027-12-15 (-4d) |  |
| RHD4CZ7RA05RD8100 | Installation of Traffic Signage for Road Network - (ROUND-05)-Z7-RA05-RD | 2027-12-08 → 2027-12-06 (-2d) | 2027-12-19 → 2027-12-15 (-4d) | -155.02d → -153d |
| 5995 | **RHD4-02-002-RA05-(RD)-Bituminous concrete wearing course including tack coat (RC2)** | 2027-12-08 → 2027-12-06 (-2d) | 2027-12-11 → 2027-12-07 (-4d) |  |
| RHD4CZ7RA05RD4100 | Supply, lay and compaction Asphaltic wearing course including tack Coat (RC2)for Road Network - (ROUND-05)-Z7-RA05-RD | 2027-12-08 → 2027-12-06 (-2d) | 2027-12-11 → 2027-12-07 (-4d) | -153.02d → -151d |
| 6000 | **RHD4-02-002-RA05-(RD)-Speed Table and Wheel Stopper** | 2027-12-11 → 2027-12-08 (-3d) | 2027-12-20 → 2027-12-16 (-4d) |  |
| RHD4CZ7RA05RD9100 | Installation for Speed Bump for Road Network - (ROUND-05)-Z7-RA05-RD | 2027-12-11 → 2027-12-08 (-3d) | 2027-12-20 → 2027-12-16 (-4d) | -153.02d → -151d |
| 5998 | **RHD4-02-002-RA05-(RD)-Pavement Marking** | 2027-12-20 → 2027-12-18 (-2d) | 2027-12-23 → 2027-12-20 (-3d) |  |
| RHD4CZ7RA05RD7100 | Pavement Markings for Road Network - (ROUND-05)-Z7-RA05-RD | 2027-12-20 → 2027-12-18 (-2d) | 2027-12-23 → 2027-12-20 (-3d) | -153.02d → -151d |
| 5964 | **RHD4-02-002-Z7-RA05-Street Lighting Network - SL** | 2027-02-14 → 2027-02-10 (-4d) | 2027-04-17 → 2027-04-12 (-5d) |  |
| 5965 | **RHD4-02-002-RA05-(SL)-Street Lighting duct banks** | 2027-02-14 → 2027-02-10 (-4d) | 2027-02-24 → 2027-02-18 (-6d) |  |
| RHD4CZ7RA05SL2100 | Excavation of Duct Banks for Street Lighting Network - (ROUND-05)-Z7-RA05-SL | 2027-02-14 → 2027-02-10 (-4d) | 2027-02-16 → 2027-02-11 (-5d) | -137.03d → -134.01d |
| RHD4CZ7RA05SL2200 | Installation of Duct Banks for Street Lighting Network - (ROUND-05)-Z7-RA05-SL | 2027-02-16 → 2027-02-13 (-3d) | 2027-02-18 → 2027-02-14 (-4d) | -137.03d → -134.01d |
| RHD4CZ7RA05SL2300 | Pouring of Duct Banks for Street Lighting Network - (ROUND-05)-Z7-RA05-SL | 2027-02-18 → 2027-02-15 (-3d) | 2027-02-21 → 2027-02-16 (-5d) | -137.03d → -134.01d |
| RHD4CZ7RA05SL2400 | Backfilling of Duct Banks for Street Lighting Network - (ROUND-05)-Z7-RA05-SL | 2027-02-21 → 2027-02-17 (-4d) | 2027-02-24 → 2027-02-18 (-6d) | -127.03d → -124.01d |
| 5966 | **RHD4-02-002-RA05-(SL)-Street Lighting Drawpit** | 2027-03-20 → 2027-03-16 (-4d) | 2027-03-24 → 2027-03-20 (-4d) |  |
| RHD4CZ7RA05SL5100 | Excavation of Drawpit size 600x600x900mm for Street Lighting Network - (ROUND-05)-Z7-RA05-SL | 2027-03-20 → 2027-03-16 (-4d) | 2027-03-22 → 2027-03-17 (-5d) | -156.03d → -153.01d |
| RHD4CZ7RA05SL5200 | Installation of Drawpit size 600x600x900mm for Street Lighting Network - (ROUND-05)-Z7-RA05-SL | 2027-03-22 → 2027-03-18 (-4d) | 2027-03-24 → 2027-03-20 (-4d) | -156.03d → -153.01d |
| 5967 | **RHD4-02-002-RA05-(SL)-Street Lighting cables** | 2027-03-24 → 2027-03-21 (-3d) | 2027-04-03 → 2027-03-29 (-5d) |  |
| RHD4CZ7RA05SL3100 | Excavation for Street Lighting Cables for Street Lighting Network - (ROUND-05)-Z7-RA05-SL | 2027-03-24 → 2027-03-21 (-3d) | 2027-03-27 → 2027-03-22 (-5d) | -156.03d → -153.01d |
| RHD4CZ7RA05SL3200 | Cable Laying of Street Lighting Cables for Street Lighting Network - (ROUND-05)-Z7-RA05-SL | 2027-03-27 → 2027-03-23 (-4d) | 2027-03-29 → 2027-03-24 (-5d) | -156.03d → -153.01d |
| RHD4CZ7RA05SL3300 | Warning tape and Backfill for Street Lighting Cables for Street Lighting Network - (ROUND-05)-Z7-RA05-SL | 2027-03-29 → 2027-03-25 (-4d) | 2027-03-31 → 2027-03-27 (-4d) | -156.03d → -153.01d |
| RHD4CZ7RA05SL3400 | Testing of Street Lighting Cables for Street Lighting Network - (ROUND-05)-Z7-RA05-SL | 2027-03-31 → 2027-03-28 (-3d) | 2027-04-03 → 2027-03-29 (-5d) | -156.03d → -153.01d |
| 5968 | **RHD4-02-002-RA05-(SL)-Street Lighting Poles** | 2027-04-03 → 2027-03-30 (-4d) | 2027-04-17 → 2027-04-12 (-5d) |  |
| RHD4CZ7RA05SL1100 | Excavation for RC Base for Lighting Poles for Street Lighting Network - (ROUND-05)-Z7-RA05-SL | 2027-04-03 → 2027-03-30 (-4d) | 2027-04-05 → 2027-03-31 (-5d) | -156.03d → -153.01d |
| RHD4CZ7RA05SL1200 | Installation for RC Base for Lighting Poles for Street Lighting Network - (ROUND-05)-Z7-RA05-SL | 2027-04-05 → 2027-04-01 (-4d) | 2027-04-07 → 2027-04-03 (-4d) | -156.03d → -153.01d |
| RHD4CZ7RA05SL1300 | Backfill for RC Base for Lighting Poles for Street Lighting Network - (ROUND-05)-Z7-RA05-SL | 2027-04-07 → 2027-04-04 (-3d) | 2027-04-10 → 2027-04-05 (-5d) | -156.03d → -153.01d |
| RHD4CZ7RA05SL1400 | Installation for Lighting Poles for Street Lighting Network - (ROUND-05)-Z7-RA05-SL | 2027-04-10 → 2027-04-06 (-4d) | 2027-04-12 → 2027-04-07 (-5d) | -156.03d → -153.01d |
| RHD4CZ7RA05SL1500 | Luminaire Installation for Lighting Poles for Street Lighting Network - (ROUND-05)-Z7-RA05-SL | 2027-04-14 → 2027-04-11 (-3d) | 2027-04-17 → 2027-04-12 (-5d) | -155.02d → -152d |
| 5970 | **RHD4-02-002-RA05-(SL)-Street Lighting Earthing System** | 2027-04-12 → 2027-04-08 (-4d) | 2027-04-14 → 2027-04-10 (-4d) |  |
| RHD4CZ7RA05SL6100 | Installation of Earthing for Lighting Poles and Fedder Pillers for Street Lighting Network - (ROUND-05)-Z7-RA05-SL | 2027-04-12 → 2027-04-08 (-4d) | 2027-04-14 → 2027-04-10 (-4d) | -156.03d → -153.01d |
| 489 | **RHD4-02-002-Z1-C081-Telecommunications Network - TC** | 2027-04-14 → 2027-04-11 (-3d) | 2027-05-02 → 2027-04-28 (-4d) |  |
| 490 | **RHD4-02-002-C081-(TC)-Telecommunications Ducts** | 2027-04-14 → 2027-04-11 (-3d) | 2027-05-02 → 2027-04-28 (-4d) |  |
| RHD4CZ7RA05TC2100 | Excavation of HDPE Ducts for Telecom Network - (RD-C-8 /1)-Z1-C081-TC | 2027-04-14 → 2027-04-11 (-3d) | 2027-04-20 → 2027-04-17 (-3d) | -156.03d → -153.01d |
| RHD4CZ7RA05TC2200 | Installation of HDPE Ducts for Telecom Network - (RD-C-8 /1)-Z1-C081-TC | 2027-04-20 → 2027-04-17 (-3d) | 2027-04-26 → 2027-04-22 (-4d) | -156.03d → -153.01d |
| RHD4CZ7RA05TC2400 | Backfilling of HDPE Ducts for Telecom Network - (RD-C-8 /1)-Z1-C081-TC | 2027-04-26 → 2027-04-22 (-4d) | 2027-05-02 → 2027-04-28 (-4d) | -156.03d → -153.01d |
| 5980 | **RHD4-02-002-Z7-RA05-Information and Communication Technologies - ICT** | 2027-04-17 → 2027-04-13 (-4d) | 2027-05-08 → 2027-05-04 (-4d) |  |
| 5981 | **RHD4-02-002-RA05-(ICT)-Information and Communication Technologies Ducts** | 2027-04-17 → 2027-04-13 (-4d) | 2027-05-08 → 2027-05-04 (-4d) |  |
| RHD4CZ7RA05ICT2100 | Excavation of HDPE Ducts for ICT Network - (ROUND-05)-Z7-RA05-ICT | 2027-04-17 → 2027-04-13 (-4d) | 2027-04-22 → 2027-04-18 (-4d) | -155.02d → -152d |
| RHD4CZ7RA05ICT2200 | Installation of HDPE Ducts for ICT Network - (ROUND-05)-Z7-RA05-ICT | 2027-04-22 → 2027-04-19 (-3d) | 2027-05-01 → 2027-04-26 (-5d) | -155.02d → -152d |
| RHD4CZ7RA05ICT2400 | Backfilling of HDPE Ducts for ICT Network - (ROUND-05)-Z7-RA05-ICT | 2027-05-02 → 2027-04-28 (-4d) | 2027-05-08 → 2027-05-04 (-4d) | -156.03d → -153.01d |
| 703 | **RHD4-02-002-Z2** |  | 2028-03-23 → 2028-03-21 (-2d) |  |
| 893 | **RHD4-02-002-Z2-L102** |  | 2028-03-19 → 2028-03-16 (-3d) |  |
| 1072 | **RHD4-02-002-Z2-L102-Road Works - RD** | 2027-01-11 → 2027-01-18 (+7d) | 2028-03-19 → 2028-03-16 (-3d) |  |
| 1073 | **RHD4-02-002-L102-(RD)-Subgrade** | 2027-01-11 → 2027-01-18 (+7d) | 2027-01-24 → 2027-01-31 (+7d) |  |
| RHD4CZ2L102RD1100 | Supply, lay and compaction subgrade compacted thickness 300 mm for Roads - (RD-L-10/2)-Z2-L102-RD | 2027-01-11 → 2027-01-18 (+7d) | 2027-01-24 → 2027-01-31 (+7d) | -155d → -161d |
| 1074 | **RHD4-02-002-L102-(RD)-Aggregate Base Course** | 2027-01-25 → 2027-02-01 (+7d) | 2027-02-03 → 2027-02-10 (+7d) |  |
| RHD4CZ2L102RD2100 | Supply, lay and compaction Aggregate base course compacted thickness 300 mmfor Roads - (RD-L-10/2)-Z2-L102-RD | 2027-01-25 → 2027-02-01 (+7d) | 2027-02-03 → 2027-02-10 (+7d) | -155d → -161d |
| 1075 | **RHD4-02-002-L102-(RD)-Bituminous base course Two Layers, including (MC1)&(RC2)** | 2027-03-20 → 2027-03-21 (+1d) | 2028-02-06 → 2028-02-03 (-3d) |  |
| RHD4CZ2L102RD3100 | Supply, lay and Asphaltic base course including Prime Coat (MC1) for 1st Layer - (RD-L-10/2)-Z2-L102-RD | 2027-03-20 → 2027-03-21 (+1d) | 2027-03-21 → 2027-03-22 (+1d) | -188d → -189d |

| ID | Task | Start | Finish | Total float |
| --- | --- | --- | --- | --- |
| RHD4CZ2L102RD3200 | Supply, lay and Asphaltic base course including Tack Coat (RC2) for 2nd Layer - (RD-L-10/2)-Z2-L102-RD | 2028-02-03 → 2028-02-02 (-1d) | 2028-02-06 → 2028-02-03 (-3d) | -186.02d → -185d |
| 1077 | **RHD4-02-002-L102-(RD)-Precast Concrete Curb** | 2028-02-06 → 2028-02-05 (-1d) | 2028-02-15 → 2028-02-13 (-2d) |  |
| RHD4CZ2L102RD5100 | Supply and installation Precast Concrete Kerb for Roads - (RD-L-10/2)-Z2-L102-RD | 2028-02-06 → 2028-02-05 (-1d) | 2028-02-15 → 2028-02-13 (-2d) | -186.02d → -185d |
| 1080 | **RHD4-02-002-L102-(RD)-Traffic Signage** | 2028-02-15 → 2028-02-14 (-1d) | 2028-02-23 → 2028-02-20 (-3d) |  |
| RHD4CZ2L102RD8100 | Installation of Traffic Signage for Road Network - (RD-L-10/2)-Z2-L102-RD | 2028-02-15 → 2028-02-14 (-1d) | 2028-02-23 → 2028-02-20 (-3d) | -186.02d → -185d |
| 1078 | **RHD4-02-002-L102-(RD)-Precast Interlocking Block Pavers** | 2028-02-23 → 2028-02-21 (-2d) | 2028-03-11 → 2028-03-08 (-3d) |  |
| RHD4CZ2L102RD6100 | Interlocking block pavers for sidewalk-footpath for Side walks and Parking areas - (RD-L-10/2)-Z2-L102-RD | 2028-02-23 → 2028-02-21 (-2d) | 2028-03-11 → 2028-03-08 (-3d) | -186.02d → -185d |
| 1076 | **RHD4-02-002-L102-(RD)-Bituminous concrete wearing course including tack coat (RC2)** | 2028-03-11 → 2028-03-09 (-2d) | 2028-03-13 → 2028-03-11 (-2d) |  |
| RHD4CZ2L102RD4100 | Supply, lay and compaction Asphaltic wearing course including tack Coat (RC2)for Road Network - (RD-L-10/2)-Z2-L102-RD | 2028-03-11 → 2028-03-09 (-2d) | 2028-03-13 → 2028-03-11 (-2d) | -186.02d → -185d |
| 1079 | **RHD4-02-002-L102-(RD)-Pavement Marking** | 2028-03-13 → 2028-03-12 (-1d) | 2028-03-19 → 2028-03-16 (-3d) |  |
| RHD4CZ2L102RD7100 | Pavement Markings for Road Network - (RD-L-10/2)-Z2-L102-RD | 2028-03-13 → 2028-03-12 (-1d) | 2028-03-19 → 2028-03-16 (-3d) | -186.02d → -185d |
| 897 | **RHD4-02-002-Z2-L102-Storm Network - ST** |  | 2027-05-13 → 2027-05-11 (-2d) |  |
| 916 | **RHD4-02-002-L102-(ST)-MH Works - 2000 mm diameter** |  | 2027-01-12 → 2027-01-19 (+7d) |  |
| RHD4CZ2L102ST3202 | Installation of Base for MH 2000 mm - (RD-L-10/2)-Z2-L102-ST | 2027-01-02 → 2027-01-09 (+7d) | 2027-01-04 → 2027-01-11 (+7d) | -137d → -143d |
| RHD4CZ2L102ST3302 | MH Ring and C.Slab works and Backfilling works for MH 2000 mm - (RD-L-10/2)-Z2-L102-ST | 2027-01-05 → 2027-01-12 (+7d) | 2027-01-07 → 2027-01-14 (+7d) | -137d → -143d |
| RHD4CZ2L102ST3402 | Steel Cover for MH 2000 mm - (RD-L-10/2)-Z2-L102-ST | 2027-01-09 → 2027-01-16 (+7d) | 2027-01-10 → 2027-01-17 (+7d) | -137d → -143d |
| RHD4CZ2L102ST3502 | Finishing, Benching, Testing works for MH 2000 mm - (RD-L-10/2)-Z2-L102-ST | 2027-01-11 → 2027-01-18 (+7d) | 2027-01-12 → 2027-01-19 (+7d) | -137d → -143d |
| 915 | **RHD4-02-002-L102-(ST)-MH Works - 1500 mm diameter** |  | 2027-05-11 → 2027-05-09 (-2d) |  |
| RHD4CZ2L102ST3201 | Installation of Base for MH 1500 mm - (RD-L-10/2)-Z2-L102-ST |  | 2027-01-09 → 2027-01-16 (+7d) | -135d → -141d |
| RHD4CZ2L102ST3301 | MH Ring and C.Slab works and Backfilling works for MH 1500 mm - (RD-L-10/2)-Z2-L102-ST | 2027-01-10 → 2027-01-17 (+7d) | 2027-01-13 → 2027-01-20 (+7d) | -135d → -141d |
| RHD4CZ2L102ST3401 | Steel Cover for MH 1500 mm - (RD-L-10/2)-Z2-L102-ST | 2027-02-18 → 2027-02-27 (+9d) | 2027-02-21 → 2027-03-01 (+8d) | -130d → -136d |
| RHD4CZ2L102ST3501 | Finishing, Benching, Testing works for MH 1500 mm - (RD-L-10/2)-Z2-L102-ST | 2027-05-06 → 2027-05-05 (-1d) | 2027-05-11 → 2027-05-09 (-2d) | -189.02d → -188d |
| 914 | **RHD4-02-002-L102-(ST)-MH Works - 1200 mm diameter** |  | 2027-05-13 → 2027-05-11 (-2d) |  |
| RHD4CZ2L102ST3200 | Installation of Base for MH 1200 mm - (RD-L-10/2)-Z2-L102-ST | 2027-01-10 → 2027-01-17 (+7d) | 2027-01-11 → 2027-01-18 (+7d) | -133d → -139d |
| RHD4CZ2L102ST3300 | MH Ring and C.Slab works and Backfilling works for MH 1200 mm - (RD-L-10/2)-Z2-L102-ST | 2027-01-14 → 2027-01-21 (+7d) | 2027-01-16 → 2027-01-23 (+7d) | -135d → -141d |
| RHD4CZ2L102ST3400 | Steel Cover for MH 1200 mm - (RD-L-10/2)-Z2-L102-ST | 2027-05-06 → 2027-05-05 (-1d) | 2027-05-09 → 2027-05-06 (-3d) | -187.02d → -186d |
| RHD4CZ2L102ST3500 | Finishing, Benching, Testing works for MH 1200 mm - (RD-L-10/2)-Z2-L102-ST | 2027-05-11 → 2027-05-10 (-1d) | 2027-05-13 → 2027-05-11 (-2d) | -189.02d → -188d |
| 904 | **RHD4-02-002-L102-(ST)-GRP Pipes - 1000 mm diameter** |  | 2027-01-10 → 2027-01-17 (+7d) |  |
| RHD4CZ2L102ST1206 | Bedding works for GRP Pipe Line 1000 mm - (RD-L-10/2)-Z2-L102-ST |  | 2027-01-03 → 2027-01-10 (+7d) | -177d → -183d |
| RHD4CZ2L102ST1306 | Installing for GRP Pipe Line 1000 mm - (RD-L-10/2)-Z2-L102-ST |  | 2027-01-05 → 2027-01-12 (+7d) | -177d → -183d |
| RHD4CZ2L102ST1406 | Primary Test for GRP Pipe Line 1000 mm - (RD-L-10/2)-Z2-L102-ST | 2027-01-06 → 2027-01-13 (+7d) | 2027-01-07 → 2027-01-14 (+7d) | -177d → -183d |
| RHD4CZ2L102ST1506 | Backfilling and warning tape works for GRP Pipe Line 1000 mm - (RD-L-10/2)-Z2-L102-ST | 2027-01-09 → 2027-01-16 (+7d) | 2027-01-10 → 2027-01-17 (+7d) | -177d → -183d |
| 903 | **RHD4-02-002-L102-(ST)-GRP Pipes - 900 mm diameter** |  | 2027-02-03 → 2027-02-10 (+7d) |  |
| RHD4CZ2L102ST1105 | Excavation works for GRP Pipe Line 900 mm - (RD-L-10/2)-Z2-L102-ST |  | 2027-01-13 → 2027-01-20 (+7d) | -177d → -183d |
| RHD4CZ2L102ST1205 | Bedding works for GRP Pipe Line 900 mm - (RD-L-10/2)-Z2-L102-ST |  | 2027-01-16 → 2027-01-23 (+7d) | -177d → -183d |
| RHD4CZ2L102ST1305 | Installing for GRP Pipe Line 900 mm - (RD-L-10/2)-Z2-L102-ST |  | 2027-01-30 → 2027-02-06 (+7d) | -177d → -183d |
| RHD4CZ2L102ST1405 | Primary Test for GRP Pipe Line 900 mm - (RD-L-10/2)-Z2-L102-ST | 2027-01-31 → 2027-02-07 (+7d) | 2027-02-01 → 2027-02-08 (+7d) | -177d → -183d |
| RHD4CZ2L102ST1505 | Backfilling and warning tape works for GRP Pipe Line 900 mm - (RD-L-10/2)-Z2-L102-ST | 2027-02-02 → 2027-02-09 (+7d) | 2027-02-03 → 2027-02-10 (+7d) | -177d → -183d |
| 902 | **RHD4-02-002-L102-(ST)-GRP Pipes - 800 mm diameter** |  | 2027-02-15 → 2027-02-23 (+8d) |  |
| RHD4CZ2L102ST1104 | Excavation works for GRP Pipe Line 800 mm - (RD-L-10/2)-Z2-L102-ST |  | 2027-02-06 → 2027-02-13 (+7d) | -177d → -183d |
| RHD4CZ2L102ST1204 | Bedding works for GRP Pipe Line 800 mm - (RD-L-10/2)-Z2-L102-ST | 2027-02-07 → 2027-02-14 (+7d) | 2027-02-08 → 2027-02-15 (+7d) | -177d → -183d |
| RHD4CZ2L102ST1304 | Installing for GRP Pipe Line 800 mm - (RD-L-10/2)-Z2-L102-ST | 2027-02-09 → 2027-02-16 (+7d) | 2027-02-10 → 2027-02-17 (+7d) | -177d → -183d |
| RHD4CZ2L102ST1404 | Primary Test for GRP Pipe Line 800 mm - (RD-L-10/2)-Z2-L102-ST | 2027-02-11 → 2027-02-18 (+7d) | 2027-02-13 → 2027-02-20 (+7d) | -177d → -183d |
| RHD4CZ2L102ST1504 | Backfilling and warning tape works for GRP Pipe Line 800 mm - (RD-L-10/2)-Z2-L102-ST | 2027-02-14 → 2027-02-21 (+7d) | 2027-02-15 → 2027-02-23 (+8d) | -177d → -183d |
| 901 | **RHD4-02-002-L102-(ST)-GRP Pipes - 700 mm diameter** |  | 2027-02-17 → 2027-02-25 (+8d) |  |
| RHD4CZ2L102ST1403 | Primary Test for GRP Pipe Line 700 mm - (RD-L-10/2)-Z2-L102-ST | 2027-02-14 → 2027-02-21 (+7d) | 2027-02-15 → 2027-02-23 (+8d) | -177d → -183d |
| RHD4CZ2L102ST1503 | Backfilling and warning tape works for GRP Pipe Line 700 mm - (RD-L-10/2)-Z2-L102-ST | 2027-02-16 → 2027-02-24 (+8d) | 2027-02-17 → 2027-02-25 (+8d) | -177d → -183d |
| 900 | **RHD4-02-002-L102-(ST)-GRP Pipes - 600 mm diameter** |  | 2027-02-20 → 2027-02-28 (+8d) |  |
| RHD4CZ2L102ST1102 | Excavation works for GRP Pipe Line 600 mm - (RD-L-10/2)-Z2-L102-ST |  | 2027-02-08 → 2027-02-15 (+7d) | -175d → -181d |
| RHD4CZ2L102ST1202 | Bedding works for GRP Pipe Line 600 mm - (RD-L-10/2)-Z2-L102-ST |  | 2027-02-10 → 2027-02-17 (+7d) | -175d → -181d |
| RHD4CZ2L102ST1302 | Installing for GRP Pipe Line 600 mm - (RD-L-10/2)-Z2-L102-ST |  | 2027-02-13 → 2027-02-20 (+7d) | -175d → -181d |
| RHD4CZ2L102ST1402 | Primary Test for GRP Pipe Line 600 mm - (RD-L-10/2)-Z2-L102-ST | 2027-02-16 → 2027-02-24 (+8d) | 2027-02-17 → 2027-02-25 (+8d) | -177d → -183d |
| RHD4CZ2L102ST1502 | Backfilling and warning tape works for GRP Pipe Line 600 mm - (RD-L-10/2)-Z2-L102-ST | 2027-02-18 → 2027-02-27 (+9d) | 2027-02-20 → 2027-02-28 (+8d) | -177d → -183d |
| 898 | **RHD4-02-002-L102-(ST)-GRP Pipes - 400 mm diameter** |  | 2027-02-17 → 2027-02-25 (+8d) |  |
| RHD4CZ2L102ST1200 | Bedding works for GRP Pipe Line 400 mm - (RD-L-10/2)-Z2-L102-ST | 2027-02-09 → 2027-02-16 (+7d) | 2027-02-10 → 2027-02-17 (+7d) | -142d → -148d |
| RHD4CZ2L102ST1300 | Installing for GRP Pipe Line 400 mm - (RD-L-10/2)-Z2-L102-ST | 2027-02-11 → 2027-02-18 (+7d) | 2027-02-13 → 2027-02-20 (+7d) | -142d → -148d |
| RHD4CZ2L102ST1400 | Primary Test for GRP Pipe Line 400 mm - (RD-L-10/2)-Z2-L102-ST | 2027-02-14 → 2027-02-21 (+7d) | 2027-02-15 → 2027-02-23 (+8d) | -142d → -148d |
| RHD4CZ2L102ST1500 | Backfilling and warning tape works for GRP Pipe Line 400 mm - (RD-L-10/2)-Z2-L102-ST | 2027-02-16 → 2027-02-24 (+8d) | 2027-02-17 → 2027-02-25 (+8d) | -142d → -148d |
| 912 | **RHD4-02-002-L102-(ST)-UPVC Pipes - 300 mm diameter** |  | 2027-05-06 → 2027-05-04 (-2d) |  |
| RHD4CZ2L102ST2100 | Excavation works for UPVC Pipe Line 300 mm - (RD-L-10/2)-Z2-L102-ST |  | 2027-02-21 → 2027-03-01 (+8d) | -142d → -148d |
| RHD4CZ2L102ST2200 | Bedding works for UPVC Pipe Line 300 mm - (RD-L-10/2)-Z2-L102-ST |  | 2027-04-26 → 2027-04-24 (-2d) | -189.02d → -188d |
| RHD4CZ2L102ST2300 | Installing for UPVC Pipe Line 300 mm - (RD-L-10/2)-Z2-L102-ST |  | 2027-04-29 → 2027-04-27 (-2d) | -189.02d → -188d |
| RHD4CZ2L102ST2400 | Primary Test for UPVC Pipe Line 300 mm - (RD-L-10/2)-Z2-L102-ST | 2027-04-29 → 2027-04-28 (-1d) | 2027-05-02 → 2027-04-29 (-3d) | -189.02d → -188d |
| RHD4CZ2L102ST2500 | Backfilling and warning tape works for UPVC Pipe Line 300 mm - (RD-L-10/2)-Z2-L102-ST | 2027-05-02 → 2027-05-01 (-1d) | 2027-05-06 → 2027-05-04 (-2d) | -189.02d → -188d |
| 920 | **RHD4-02-002-L102-(ST)-Concrete Encasement** | 2027-04-27 → 2027-04-26 (-1d) | 2027-04-29 → 2027-04-27 (-2d) |  |
| RHD4CZ2L102ST6100 | Pipe Encasement for Storm Pipelines - (RD-L-10/2)-Z2-L102-ST | 2027-04-27 → 2027-04-26 (-1d) | 2027-04-29 → 2027-04-27 (-2d) | -187.02d → -186d |
| 921 | **RHD4-02-002-Z2-L102-Catch Basin - ST** |  | 2027-01-27 → 2027-02-03 (+7d) |  |
| 922 | **RHD4-02-002-L102-(ST)-Single Catch Basin Works** |  | 2027-01-23 → 2027-01-30 (+7d) |  |
| RHD4CZ2L102ST7100 | Excavation works for Single Catch Basin - (RD-L-10/2)-Z2-L102-ST |  | 2027-01-04 → 2027-01-11 (+7d) | -133d → -139d |
| RHD4CZ2L102ST7200 | PC Blinding, Installation and Pipe connection for Single Catch Basin - (RD-L-10/2)-Z2-L102-ST | 2027-01-05 → 2027-01-12 (+7d) | 2027-01-07 → 2027-01-14 (+7d) | -133d → -139d |

| ID | Task | Start | Finish | Total float |
| --- | --- | --- | --- | --- |
| RHD4CZ2L102ST7300 | Rings & C.Slab & Final Backfill for Single Catch Basin - (RD-L-10/2)-Z2-L102-ST | 2027-01-09 → 2027-01-16 (+7d) | 2027-01-12 → 2027-01-19 (+7d) | -133d → -139d |
| RHD4CZ2L102ST7400 | Steel Cover for Single Catch Basin - (RD-L-10/2)-Z2-L102-ST | 2027-01-13 → 2027-01-20 (+7d) | 2027-01-16 → 2027-01-23 (+7d) | -133d → -139d |
| RHD4CZ2L102ST7500 | Finishing and Insulation works for Single Catch Basin - (RD-L-10/2)-Z2-L102-ST | 2027-01-17 → 2027-01-24 (+7d) | 2027-01-23 → 2027-01-30 (+7d) | -133d → -139d |
| 923 | **RHD4-02-002-L102-(ST)-Double Catch Basin Works** | 2027-01-17 → 2027-01-24 (+7d) | 2027-01-27 → 2027-02-03 (+7d) |  |
| RHD4CZ2L102ST8100 | Excavation works for Double Catch Basin - (RD-L-10/2)-Z2-L102-ST | 2027-01-17 → 2027-01-24 (+7d) | 2027-01-18 → 2027-01-25 (+7d) | -135d → -141d |
| RHD4CZ2L102ST8200 | PC Blinding, Installation and Pipe connection for Double Catch Basin - (RD-L-10/2)-Z2-L102-ST | 2027-01-19 → 2027-01-26 (+7d) | 2027-01-20 → 2027-01-27 (+7d) | -135d → -141d |
| RHD4CZ2L102ST8300 | Rings & C.Slab & Final Backfillfor Double Catch Basin - (RD-L-10/2)-Z2-L102-ST | 2027-01-21 → 2027-01-28 (+7d) | 2027-01-23 → 2027-01-30 (+7d) | -135d → -141d |
| RHD4CZ2L102ST8400 | Steel Cover for Double Catch Basin - (RD-L-10/2)-Z2-L102-ST | 2027-01-24 → 2027-01-31 (+7d) | 2027-01-25 → 2027-02-01 (+7d) | -135d → -141d |
| RHD4CZ2L102ST8500 | Finishing and Insulation works for Double Catch Basin - (RD-L-10/2)-Z2-L102-ST | 2027-01-26 → 2027-02-02 (+7d) | 2027-01-27 → 2027-02-03 (+7d) | -135d → -141d |
| 894 | **RHD4-02-002-Z2-L102-Concrete Box Culvert - ST** |  | 2027-08-25 → 2027-08-23 (-2d) |  |
| 895 | **RHD4-02-002-L102-(ST)-Concrete Box Culvert** |  | 2027-08-25 → 2027-08-23 (-2d) |  |
| RHD4CZ2L102ST4100 | Excavation works for Box Culvert - (RD-L-10/2)-Z2-L102-ST |  | 2027-07-26 → 2027-07-24 (-2d) | -186.02d → -185d |
| RHD4CZ2L102ST4500 | Wall and slab works for Box Culvert - (RD-L-10/2)-Z2-L102-ST |  | 2027-08-14 → 2027-08-11 (-3d) | -186.02d → -185d |
| RHD4CZ2L102ST4200 | PC works for Box Culvert - (RD-L-10/2)-Z2-L102-ST |  | 2027-07-28 → 2027-07-26 (-2d) | -186.02d → -185d |
| RHD4CZ2L102ST4400 | Raft works for Box Culvert - (RD-L-10/2)-Z2-L102-ST |  | 2027-08-05 → 2027-08-03 (-2d) | -186.02d → -185d |
| RHD4CZ2L102ST4600 | Insulation and Testing for Box Culvert - (RD-L-10/2)-Z2-L102-ST |  | 2027-08-25 → 2027-08-23 (-2d) | -186.02d → -185d |
| RHD4CZ2L102ST4700 | Backfilling works for Box Culvert - (RD-L-10/2)-Z2-L102-ST | 2027-08-14 → 2027-08-12 (-2d) | 2027-08-18 → 2027-08-16 (-2d) | -186.02d → -185d |
| 896 | **RHD4-02-002-L102-(ST)-Concrete Chambers** | 2027-07-26 → 2027-07-25 (-1d) | 2027-08-04 → 2027-08-02 (-2d) |  |
| RHD4CZ2L102ST5100 | Excavation and Bedding for Concrete Chambers - for Box Culvert - (RD-L-10/2)-Z2-L102-ST | 2027-07-26 → 2027-07-25 (-1d) | 2027-07-28 → 2027-07-26 (-2d) | -176.02d → -175d |
| RHD4CZ2L102ST5200 | PC works for Concrete Chambers - for Box Culvert - (RD-L-10/2)-Z2-L102-ST | 2027-07-28 → 2027-07-27 (-1d) | 2027-07-31 → 2027-07-28 (-3d) | -176.02d → -175d |
| RHD4CZ2L102ST5300 | Installation for Concrete Chambers - for Box Culvert - (RD-L-10/2)-Z2-L102-ST | 2027-07-31 → 2027-07-29 (-2d) | 2027-08-02 → 2027-07-31 (-2d) | -176.02d → -175d |
| RHD4CZ2L102ST5400 | Backfilling works for Concrete Chambers - for Box Culvert - (RD-L-10/2)-Z2-L102-ST | 2027-08-02 → 2027-08-01 (-1d) | 2027-08-04 → 2027-08-02 (-2d) | -174.02d → -173d |
| 946 | **RHD4-02-002-Z2-L102-Sewage Network - SW** |  | 2027-06-21 → 2027-06-19 (-2d) |  |
| 956 | **RHD4-02-002-L102-(SW)-MH Works - 1200 mm diameter** |  | 2027-06-21 → 2027-06-19 (-2d) |  |
| RHD4CZ2L102SW3100 | Excavation and PC Blinding works for MH 1200 mm - (RD-L-10/2)-Z2-L102-SW |  | 2027-05-10 → 2027-05-08 (-2d) | -186.02d → -185d |
| RHD4CZ2L102SW3200 | Installation of Base for MH 1200 mm - (RD-L-10/2)-Z2-L102-SW | 2027-05-13 → 2027-05-12 (-1d) | 2027-05-27 → 2027-05-25 (-2d) | -189.02d → -188d |
| RHD4CZ2L102SW3300 | MH Ring and C.Slab works and Backfilling works for MH 1200 mm - (RD-L-10/2)-Z2-L102-SW | 2027-05-27 → 2027-05-26 (-1d) | 2027-06-06 → 2027-06-03 (-3d) | -189.02d → -188d |
| RHD4CZ2L102SW3400 | Steel Cover for MH 1200 mm - (RD-L-10/2)-Z2-L102-SW | 2027-06-06 → 2027-06-05 (-1d) | 2027-06-12 → 2027-06-09 (-3d) | -189.02d → -188d |
| RHD4CZ2L102SW3500 | Finishing, Benching, Testing works for MH 1200 mm - (RD-L-10/2)-Z2-L102-SW | 2027-06-12 → 2027-06-10 (-2d) | 2027-06-21 → 2027-06-19 (-2d) | -189.02d → -188d |
| 952 | **RHD4-02-002-L102-(SW)-UPVC Pipes - 200 mm diameter** |  | 2027-06-19 → 2027-06-16 (-3d) |  |
| RHD4CZ2L102SW2100 | Excavation works for UPVC Pipe Line 200 mm - (RD-L-10/2)-Z2-L102-SW |  | 2027-05-12 → 2027-05-10 (-2d) | -173.02d → -172d |
| RHD4CZ2L102SW2200 | Bedding works for UPVC Pipe Line 200 mm - (RD-L-10/2)-Z2-L102-SW |  | 2027-05-19 → 2027-05-12 (-7d) | -173.02d → -172d |
| RHD4CZ2L102SW2300 | Installing for UPVC Pipe Line 200 mm - (RD-L-10/2)-Z2-L102-SW |  | 2027-06-08 → 2027-06-06 (-2d) | -188.02d → -187d |
| RHD4CZ2L102SW2400 | Primary Test for UPVC Pipe Line 200 mm - (RD-L-10/2)-Z2-L102-SW | 2027-06-08 → 2027-06-07 (-1d) | 2027-06-12 → 2027-06-09 (-3d) | -188.02d → -187d |
| RHD4CZ2L102SW2500 | Backfilling and warning tape works for UPVC Pipe Line 200 mm - (RD-L-10/2)-Z2-L102-SW | 2027-06-12 → 2027-06-10 (-2d) | 2027-06-19 → 2027-06-16 (-3d) | -188.02d → -187d |
| 983 | **RHD4-02-002-Z2-L102-Potable Network - PT** | 2027-06-19 → 2027-06-17 (-2d) | 2027-08-22 → 2027-08-19 (-3d) |  |
| 985 | **RHD4-02-002-L102-(PT)-HDPE Pipes - 160 mm diameter** | 2027-06-19 → 2027-06-17 (-2d) | 2027-07-21 → 2027-07-19 (-2d) |  |
| RHD4CZ2L102PT1101 | Excavation works for HDPE Pipline 160 mm - (RD-L-10/2)-Z2-L102-PT | 2027-06-19 → 2027-06-17 (-2d) | 2027-06-24 → 2027-06-22 (-2d) | -188.02d → -187d |
| RHD4CZ2L102PT1201 | Bedding works for HDPE Pipline 160 mm - (RD-L-10/2)-Z2-L102-PT | 2027-06-24 → 2027-06-23 (-1d) | 2027-06-29 → 2027-06-27 (-2d) | -187.02d → -186d |
| RHD4CZ2L102PT1301 | Installing for HDPE Pipline 160 mm - (RD-L-10/2)-Z2-L102-PT | 2027-06-29 → 2027-06-28 (-1d) | 2027-07-07 → 2027-07-05 (-2d) | -187.02d → -186d |
| RHD4CZ2L102PT1401 | Primary Test for HDPE Pipline 160 mm - (RD-L-10/2)-Z2-L102-PT | 2027-07-11 → 2027-07-10 (-1d) | 2027-07-14 → 2027-07-12 (-2d) | -187.02d → -186d |
| RHD4CZ2L102PT1501 | Backfilling and warning tape works for HDPE Pipline 160 mm - (RD-L-10/2)-Z2-L102-PT | 2027-07-14 → 2027-07-13 (-1d) | 2027-07-21 → 2027-07-19 (-2d) | -186.02d → -185d |
| 984 | **RHD4-02-002-L102-(PT)-HDPE Pipes - 110 mm diameter** | 2027-06-24 → 2027-06-23 (-1d) | 2027-07-24 → 2027-07-21 (-3d) |  |
| RHD4CZ2L102PT1100 | Excavation works for HDPE Pipline 110 mm - (RD-L-10/2)-Z2-L102-PT | 2027-06-24 → 2027-06-23 (-1d) | 2027-06-27 → 2027-06-24 (-3d) | -180.02d → -179d |
| RHD4CZ2L102PT1200 | Bedding works for HDPE Pipline 110 mm - (RD-L-10/2)-Z2-L102-PT | 2027-06-29 → 2027-06-28 (-1d) | 2027-07-01 → 2027-06-29 (-2d) | -182.02d → -181d |
| RHD4CZ2L102PT1300 | Installing for HDPE Pipline 110 mm - (RD-L-10/2)-Z2-L102-PT | 2027-07-07 → 2027-07-06 (-1d) | 2027-07-10 → 2027-07-07 (-3d) | -187.02d → -186d |
| RHD4CZ2L102PT1400 | Primary Test for HDPE Pipline 110 mm - (RD-L-10/2)-Z2-L102-PT | 2027-07-14 → 2027-07-13 (-1d) | 2027-07-17 → 2027-07-14 (-3d) | -182.02d → -181d |
| RHD4CZ2L102PT1500 | Backfilling and warning tape works for HDPE Pipline 110 mm - (RD-L-10/2)-Z2-L102-PT | 2027-07-21 → 2027-07-20 (-1d) | 2027-07-24 → 2027-07-21 (-3d) | -186.02d → -185d |
| 989 | **RHD4-02-002-L102-(PT)-Gate Valves (Direct Buried)** | 2027-07-07 → 2027-07-06 (-1d) | 2027-07-27 → 2027-07-25 (-2d) |  |
| RHD4CZ2L102PT3100 | Installation for Direct Buried Gate Valves - (RD-L-10/2)-Z2-L102-PT | 2027-07-07 → 2027-07-06 (-1d) | 2027-07-11 → 2027-07-08 (-3d) | -187.02d → -186d |
| RHD4CZ2L102PT3200 | Stem and Service box for Direct Buried Gate Valves - (RD-L-10/2)-Z2-L102-PT | 2027-07-24 → 2027-07-22 (-2d) | 2027-07-27 → 2027-07-25 (-2d) | -185.02d → -184d |
| 992 | **RHD4-02-002-L102-(PT)-Wash out Valve Chambers** | 2027-07-21 → 2027-07-20 (-1d) | 2027-07-31 → 2027-07-28 (-3d) |  |
| RHD4CZ2L102PT2101 | Excavation and Bedding for Wash out Valve Chambers for Potable Water Network - (RD-L-10/2)-Z2-L102-PT | 2027-07-21 → 2027-07-20 (-1d) | 2027-07-24 → 2027-07-21 (-3d) | -186.02d → -185d |
| RHD4CZ2L102PT2201 | PC works for Wash out Valve Chambers for Potable Water Network - (RD-L-10/2)-Z2-L102-PT | 2027-07-24 → 2027-07-22 (-2d) | 2027-07-26 → 2027-07-24 (-2d) | -186.02d → -185d |
| RHD4CZ2L102PT2301 | Installation for Wash out Valve Chambers for Potable Water Network - (RD-L-10/2)-Z2-L102-PT | 2027-07-26 → 2027-07-25 (-1d) | 2027-07-28 → 2027-07-26 (-2d) | -186.02d → -185d |
| RHD4CZ2L102PT2401 | Backfilling works for Wash out Valve Chambers for Potable Water Network - (RD-L-10/2)-Z2-L102-PT | 2027-07-28 → 2027-07-27 (-1d) | 2027-07-31 → 2027-07-28 (-3d) | -186.02d → -185d |
| 993 | **RHD4-02-002-L102-(PT)-Wash out Valves** | 2027-07-26 → 2027-07-25 (-1d) | 2027-08-02 → 2027-07-31 (-2d) |  |
| RHD4CZ2L102PT3102 | Installation for Wash out Valves for Potable Water Network - (RD-L-10/2)-Z2-L102-PT | 2027-07-26 → 2027-07-25 (-1d) | 2027-07-28 → 2027-07-26 (-2d) | -184.02d → -183d |
| RHD4CZ2L102PT3202 | Stem and Service box for Wash out Valves for Potable Water Network - (RD-L-10/2)-Z2-L102-PT | 2027-07-31 → 2027-07-29 (-2d) | 2027-08-02 → 2027-07-31 (-2d) | -186.02d → -185d |
| 994 | **RHD4-02-002-L102-(PT)-Air Valve Chambers** | 2027-07-24 → 2027-07-22 (-2d) | 2027-08-02 → 2027-07-31 (-2d) |  |
| RHD4CZ2L102PT2102 | Excavation and Bedding for Air Valve Chambers for Potable Water Network - (RD-L-10/2)-Z2-L102-PT | 2027-07-24 → 2027-07-22 (-2d) | 2027-07-26 → 2027-07-24 (-2d) | -186.02d → -185d |
| RHD4CZ2L102PT2202 | PC works for Air Valve Chambers for Potable Water Network - (RD-L-10/2)-Z2-L102-PT | 2027-07-26 → 2027-07-25 (-1d) | 2027-07-28 → 2027-07-26 (-2d) | -186.02d → -185d |
| RHD4CZ2L102PT2302 | Installation for Air Valve Chambers for Potable Water Network - (RD-L-10/2)-Z2-L102-PT | 2027-07-28 → 2027-07-27 (-1d) | 2027-07-31 → 2027-07-28 (-3d) | -186.02d → -185d |
| RHD4CZ2L102PT2402 | Backfilling works for Air Valve Chambers for Potable Water Network - (RD-L-10/2)-Z2-L102-PT | 2027-07-31 → 2027-07-29 (-2d) | 2027-08-02 → 2027-07-31 (-2d) | -186.02d → -185d |
| 995 | **RHD4-02-002-L102-(PT)-Air Valves** | 2027-07-31 → 2027-07-29 (-2d) | 2027-08-04 → 2027-08-02 (-2d) |  |
| RHD4CZ2L102PT3103 | Installation for Air Valves for Potable Water Network - (RD-L-10/2)-Z2-L102-PT | 2027-07-31 → 2027-07-29 (-2d) | 2027-08-02 → 2027-07-31 (-2d) | -186.02d → -185d |
| RHD4CZ2L102PT3203 | Stem and Service box for Air Valves for Potable Water Network - (RD-L-10/2)-Z2-L102-PT | 2027-08-02 → 2027-08-01 (-1d) | 2027-08-04 → 2027-08-02 (-2d) | -186.02d → -185d |
| 996 | **RHD4-02-002-L102-(PT)-Fire Hydrant** | 2027-07-24 → 2027-07-22 (-2d) | 2027-08-22 → 2027-08-19 (-3d) |  |
| RHD4CZ2L102PT4100 | Excavation and Bedding and Pipe Installation for Fire Hydrant - (RD-L-10/2)-Z2-L102-PT | 2027-07-24 → 2027-07-22 (-2d) | 2027-08-01 → 2027-07-29 (-3d) | -169.02d → -168d |
| RHD4CZ2L102PT4200 | Valve Installation for Fire Hydrant - (RD-L-10/2)-Z2-L102-PT | 2027-08-01 → 2027-07-31 (-1d) | 2027-08-07 → 2027-08-04 (-3d) | -169.02d → -168d |

| ID | Task | Start | Finish | Total float |
| --- | --- | --- | --- | --- |
| RHD4CZ2L102PT4300 | Stem for Fire Hydrant - (RD-L-10/2)-Z2-L102-PT | 2027-08-07 → 2027-08-05 (-2d) | 2027-08-12 → 2027-08-10 (-2d) | -169.02d → -168d |
| RHD4CZ2L102PT4400 | Fire Installation for Fire Hydrant - (RD-L-10/2)-Z2-L102-PT | 2027-08-12 → 2027-08-11 (-1d) | 2027-08-18 → 2027-08-16 (-2d) | -169.02d → -168d |
| RHD4CZ2L102PT4500 | Protection Barriers for Fire Hydrant - (RD-L-10/2)-Z2-L102-PT | 2027-08-18 → 2027-08-17 (-1d) | 2027-08-22 → 2027-08-19 (-3d) | -169.02d → -168d |
| 998 | **RHD4-02-002-Z2-L102-Irrigation Network - IRR** | 2027-07-14 → 2027-07-13 (-1d) | 2027-09-04 → 2027-08-31 (-4d) |  |
| 1003 | **RHD4-02-002-L102-(IRR)-HDPE Pipes - 315 mm diameter** | 2027-07-14 → 2027-07-13 (-1d) | 2027-08-30 → 2027-08-26 (-4d) |  |
| RHD4CZ2L102IRR1104 | Excavation works for HDPE Pipline 315 mm - (RD-L-10/2)-Z2-L102-IRR | 2027-07-14 → 2027-07-13 (-1d) | 2027-07-22 → 2027-07-20 (-2d) | -187.02d → -186d |
| RHD4CZ2L102IRR1204 | Bedding works for HDPE Pipline 315 mm - (RD-L-10/2)-Z2-L102-IRR | 2027-07-22 → 2027-07-21 (-1d) | 2027-07-29 → 2027-07-27 (-2d) | -183.02d → -182d |
| RHD4CZ2L102IRR1304 | Installing for HDPE Pipline 315 mm - (RD-L-10/2)-Z2-L102-IRR | 2027-08-11 → 2027-08-09 (-2d) | 2027-08-19 → 2027-08-16 (-3d) | -194.02d → -192d |
| RHD4CZ2L102IRR1404 | Primary Test for HDPE Pipline 315 mm - (RD-L-10/2)-Z2-L102-IRR | 2027-08-19 → 2027-08-17 (-2d) | 2027-08-23 → 2027-08-19 (-4d) | -194.02d → -192d |
| RHD4CZ2L102IRR1504 | Backfilling and warning tape works for HDPE Pipline 315 mm - (RD-L-10/2)-Z2-L102-IRR | 2027-08-23 → 2027-08-21 (-2d) | 2027-08-30 → 2027-08-26 (-4d) | -194.02d → -192d |
| 6863 | **RHD4-02-002-L102-(IRR)-HDPE Pipes - 160 mm diameter** | 2027-07-14 → 2027-07-13 (-1d) | 2027-07-26 → 2027-07-24 (-2d) |  |
| RHD4CZ2L102IRR1100 | Excavation works for HDPE Pipline 160 mm - (RD-L-10/2)-Z2-L102-IRR | 2027-07-14 → 2027-07-13 (-1d) | 2027-07-17 → 2027-07-14 (-3d) | -177.02d → -176d |
| RHD4CZ2L102IRR1200 | Bedding works for HDPE Pipline 160 mm - (RD-L-10/2)-Z2-L102-IRR | 2027-07-17 → 2027-07-15 (-2d) | 2027-07-19 → 2027-07-17 (-2d) | -177.02d → -176d |
| RHD4CZ2L102IRR1300 | Installing for HDPE Pipline 160 mm - (RD-L-10/2)-Z2-L102-IRR | 2027-07-19 → 2027-07-18 (-1d) | 2027-07-21 → 2027-07-19 (-2d) | -177.02d → -176d |
| RHD4CZ2L102IRR1400 | Primary Test for HDPE Pipline 160 mm - (RD-L-10/2)-Z2-L102-IRR | 2027-07-21 → 2027-07-20 (-1d) | 2027-07-24 → 2027-07-21 (-3d) | -177.02d → -176d |
| RHD4CZ2L102IRR1500 | Backfilling and warning tape works for HDPE Pipline 160 mm - (RD-L-10/2)-Z2-L102-IRR | 2027-07-24 → 2027-07-22 (-2d) | 2027-07-26 → 2027-07-24 (-2d) | -177.02d → -176d |
| 1007 | **RHD4-02-002-L102-(IRR)-Gate Valves (Direct Buried)** | 2027-08-15 → 2027-08-12 (-3d) | 2027-09-04 → 2027-08-31 (-4d) |  |
| RHD4CZ2L102IRR3100 | Installation for Direct Buried Gate Valves - (RD-L-10/2)-Z2-L102-IRR | 2027-08-15 → 2027-08-12 (-3d) | 2027-08-19 → 2027-08-16 (-3d) | -194.02d → -192d |
| RHD4CZ2L102IRR3200 | Stem and Service box for Direct Buried Gate Valves - (RD-L-10/2)-Z2-L102-IRR | 2027-08-30 → 2027-08-28 (-2d) | 2027-09-04 → 2027-08-31 (-4d) | -194.02d → -192d |
| 1032 | **RHD4-02-002-Z2-L102-Medium Voltage Network - MV** | 2027-06-24 → 2027-06-23 (-1d) | 2027-09-09 → 2027-09-07 (-2d) |  |
| 1033 | **RHD4-02-002-L102-(MV)-Medium Voltage cable trench** | 2027-06-24 → 2027-06-23 (-1d) | 2027-08-28 → 2027-08-25 (-3d) |  |
| RHD4CZ2L102MV1100 | Excavation for Medium Voltage Trench - (RD-L-10/2)-Z2-L102-MV | 2027-06-24 → 2027-06-23 (-1d) | 2027-07-19 → 2027-07-17 (-2d) | -188.02d → -187d |
| RHD4CZ2L102MV1200 | Trench Backfilling for Medium Voltage Network - (RD-L-10/2)-Z2-L102-MV | 2027-08-03 → 2027-08-02 (-1d) | 2027-08-28 → 2027-08-25 (-3d) | -188.02d → -187d |
| 1035 | **RHD4-02-002-L102-(MV)-Medium Voltage cables 3Cx 500 mm²** | 2027-07-19 → 2027-07-18 (-1d) | 2027-09-09 → 2027-09-07 (-2d) |  |
| RHD4CZ2L102MV3100 | Installation of Medium Voltage Cables 3Cx 500 mm² - (RD-L-10/2)-Z2-L102-MV | 2027-07-19 → 2027-07-18 (-1d) | 2027-07-29 → 2027-07-27 (-2d) | -188.02d → -187d |
| RHD4CZ2L102MV3200 | Joints Installation of Medium Voltage Cables 3Cx 500 mm² - (RD-L-10/2)-Z2-L102-MV | 2027-07-29 → 2027-07-28 (-1d) | 2027-08-03 → 2027-08-01 (-2d) | -188.02d → -187d |
| RHD4CZ2L102MV3300 | Testing of Medium Voltage Cables 3Cx 500 mm² - (RD-L-10/2)-Z2-L102-MV | 2027-08-28 → 2027-08-26 (-2d) | 2027-09-07 → 2027-09-05 (-2d) | -184.02d → -183d |
| RHD4CZ2L102MV3400 | Termination of Medium Voltage Cables 3Cx 500 mm² - (RD-L-10/2)-Z2-L102-MV | 2027-09-07 → 2027-09-06 (-1d) | 2027-09-09 → 2027-09-07 (-2d) | -184.02d → -183d |
| 1036 | **RHD4-02-002-L102-(MV)-Medium Voltage cables 3Cx 50 mm²** | 2027-08-28 → 2027-08-26 (-2d) | 2027-08-30 → 2027-08-28 (-2d) |  |
| RHD4CZ2L102MV3401 | Termination of Medium Voltage Cables 3Cx 50 mm² - (RD-L-10/2)-Z2-L102-MV | 2027-08-28 → 2027-08-26 (-2d) | 2027-08-30 → 2027-08-28 (-2d) | -175.02d → -174d |
| 1037 | **RHD4-02-002-L102-(MV)-Normally open Point (Outdoor Type)** | 2027-07-27 → 2027-07-26 (-1d) | 2027-08-01 → 2027-07-29 (-3d) |  |
| RHD4CZ2L102MV4100 | Installation for Normally open Point - (RD-L-10/2)-Z2-L102-MV | 2027-07-27 → 2027-07-26 (-1d) | 2027-07-29 → 2027-07-27 (-2d) | -169.02d → -168d |
| RHD4CZ2L102MV4200 | Termination for Normally open Point - (RD-L-10/2)-Z2-L102-MV | 2027-07-29 → 2027-07-28 (-1d) | 2027-08-01 → 2027-07-29 (-3d) | -169.02d → -168d |
| 5390 | **RHD4-02-002-Z2-L102-Low Voltage Network - LV** | 2027-07-22 → 2027-07-21 (-1d) | 2027-08-10 → 2027-08-08 (-2d) |  |
| 5393 | **RHD4-02-002-L102-(LV)-Low Voltage cables** | 2027-07-22 → 2027-07-21 (-1d) | 2027-08-10 → 2027-08-08 (-2d) |  |
| RHD4CZ2L102LV3100 | Excavation for Low Voltage Cables for Low Voltage Network - (RD-L-10/2)-Z2-L102-LV | 2027-07-22 → 2027-07-21 (-1d) | 2027-07-28 → 2027-07-26 (-2d) | -187.02d → -186d |
| RHD4CZ2L102LV3200 | Cable Laying of Low Voltage Cables for Low Voltage Network - (RD-L-10/2)-Z2-L102-LV | 2027-07-28 → 2027-07-27 (-1d) | 2027-08-02 → 2027-07-31 (-2d) | -187.02d → -186d |
| RHD4CZ2L102LV3300 | Warning tape and Backfill for Low Voltage Cables for Low Voltage Network - (RD-L-10/2)-Z2-L102-LV | 2027-08-02 → 2027-08-01 (-1d) | 2027-08-07 → 2027-08-04 (-3d) | -187.02d → -186d |
| RHD4CZ2L102LV3400 | Testing of Low Voltage Cables for Low Voltage Network - (RD-L-10/2)-Z2-L102 | 2027-08-07 → 2027-08-05 (-2d) | 2027-08-10 → 2027-08-08 (-2d) | -187.02d → -186d |
| 1045 | **RHD4-02-002-Z2-L102-Street Lighting Network - SL** | 2027-08-04 → 2027-08-03 (-1d) | 2027-11-04 → 2027-11-02 (-2d) |  |
| 1046 | **RHD4-02-002-L102-(SL)-Street Lighting duct banks** | 2027-08-04 → 2027-08-03 (-1d) | 2027-08-24 → 2027-08-22 (-2d) |  |
| RHD4CZ2L102SL2100 | Excavation of Duct Banks for Street Lighting Network - (RD-L-10/2)-Z2-L102-SL | 2027-08-04 → 2027-08-03 (-1d) | 2027-08-09 → 2027-08-07 (-2d) | -186.02d → -185d |
| RHD4CZ2L102SL2200 | Installation of Duct Banks for Street Lighting Network - (RD-L-10/2)-Z2-L102-SL | 2027-08-09 → 2027-08-08 (-1d) | 2027-08-16 → 2027-08-14 (-2d) | -186.02d → -185d |
| RHD4CZ2L102SL2300 | Pouring of Duct Banks for Street Lighting Network - (RD-L-10/2)-Z2-L102-SL | 2027-08-16 → 2027-08-15 (-1d) | 2027-08-21 → 2027-08-18 (-3d) | -186.02d → -185d |
| RHD4CZ2L102SL2400 | Backfilling of Duct Banks for Street Lighting Network - (RD-L-10/2)-Z2-L102-SL | 2027-08-21 → 2027-08-19 (-2d) | 2027-08-24 → 2027-08-22 (-2d) | -185.02d → -184d |
| 1047 | **RHD4-02-002-L102-(SL)-Street Lighting Drawpit** | 2027-08-21 → 2027-08-19 (-2d) | 2027-08-25 → 2027-08-23 (-2d) |  |
| RHD4CZ2L102SL5100 | Excavation of Drawpit size 600x600x900mm for Street Lighting Network - (RD-L-10/2)-Z2-L102-SL | 2027-08-21 → 2027-08-19 (-2d) | 2027-08-23 → 2027-08-21 (-2d) | -186.02d → -185d |
| RHD4CZ2L102SL5200 | Installation of Drawpit size 600x600x900mm for Street Lighting Network - (RD-L-10/2)-Z2-L102-SL | 2027-08-23 → 2027-08-22 (-1d) | 2027-08-25 → 2027-08-23 (-2d) | -186.02d → -185d |
| 1048 | **RHD4-02-002-L102-(SL)-Street Lighting cables** | 2027-09-14 → 2027-09-13 (-1d) | 2027-10-20 → 2027-10-18 (-2d) |  |
| RHD4CZ2L102SL3100 | Excavation for Street Lighting Cables for Street Lighting Network - (RD-L-10/2)-Z2-L102-SL | 2027-09-14 → 2027-09-13 (-1d) | 2027-09-26 → 2027-09-22 (-4d) | -188.02d → -187d |
| RHD4CZ2L102SL3200 | Cable Laying of Street Lighting Cables for Street Lighting Network - (RD-L-10/2)-Z2-L102-SL | 2027-09-26 → 2027-09-25 (-1d) | 2027-10-05 → 2027-10-03 (-2d) | -188.02d → -187d |
| RHD4CZ2L102SL3300 | Warning tape and Backfill for Street Lighting Cables for Street Lighting Network - (RD-L-10/2)-Z2-L102-SL | 2027-10-05 → 2027-10-04 (-1d) | 2027-10-14 → 2027-10-12 (-2d) | -188.02d → -187d |
| RHD4CZ2L102SL3400 | Testing of Street Lighting Cables for Street Lighting Network - (RD-L-10/2)-Z2-L102-SL | 2027-10-14 → 2027-10-13 (-1d) | 2027-10-20 → 2027-10-18 (-2d) | -188.02d → -187d |
| 1049 | **RHD4-02-002-L102-(SL)-Street Lighting Poles** | 2027-08-28 → 2027-08-26 (-2d) | 2027-11-04 → 2027-11-02 (-2d) |  |
| RHD4CZ2L102SL1100 | Excavation for RC Base for Lighting Poles for Street Lighting Network - (RD-L-10/2)-Z2-L102-SL | 2027-08-28 → 2027-08-26 (-2d) | 2027-09-02 → 2027-08-31 (-2d) | -188.02d → -187d |
| RHD4CZ2L102SL1200 | Installation for RC Base for Lighting Poles for Street Lighting Network - (RD-L-10/2)-Z2-L102-SL | 2027-09-02 → 2027-09-01 (-1d) | 2027-09-08 → 2027-09-06 (-2d) | -188.02d → -187d |
| RHD4CZ2L102SL1300 | Backfill for RC Base for Lighting Poles for Street Lighting Network - (RD-L-10/2)-Z2-L102-SL | 2027-09-08 → 2027-09-07 (-1d) | 2027-09-14 → 2027-09-12 (-2d) | -188.02d → -187d |
| RHD4CZ2L102SL1400 | Installation for Lighting Poles for Street Lighting Network - (RD-L-10/2)-Z2-L102-SL | 2027-10-20 → 2027-10-19 (-1d) | 2027-10-30 → 2027-10-27 (-3d) | -188.02d → -187d |
| RHD4CZ2L102SL1500 | Luminaire Installation for Lighting Poles for Street Lighting Network - (RD-L-10/2)-Z2-L102-SL | 2027-10-30 → 2027-10-28 (-2d) | 2027-11-04 → 2027-11-02 (-2d) | -188.02d → -187d |
| 1051 | **RHD4-02-002-L102-(SL)-Street Lighting Earthing System** | 2027-10-30 → 2027-10-28 (-2d) | 2027-11-01 → 2027-10-30 (-2d) |  |
| RHD4CZ2L102SL6100 | Installation of Earthing for Lighting Poles and Fedder Pillers for Street Lighting Network - (RD-L-10/2)-Z2-L102-SL | 2027-10-30 → 2027-10-28 (-2d) | 2027-11-01 → 2027-10-30 (-2d) | -186.02d → -185d |
| 1057 | **RHD4-02-002-Z2-L102-Telecommunications Network - TC** | 2027-11-01 → 2027-10-31 (-1d) | 2027-12-20 → 2027-12-18 (-2d) |  |
| 1058 | **RHD4-02-002-L102-(TC)-Telecommunications Ducts** | 2027-11-01 → 2027-10-31 (-1d) | 2027-12-20 → 2027-12-18 (-2d) |  |
| RHD4CZ2L102TC2100 | Excavation of HDPE Ducts for Telecom Network - (RD-L-10/2)-Z2-L102-TC | 2027-11-01 → 2027-10-31 (-1d) | 2027-11-18 → 2027-11-16 (-2d) | -186.02d → -185d |
| RHD4CZ2L102TC2200 | Installation of HDPE Ducts for Telecom Network - (RD-L-10/2)-Z2-L102-TC | 2027-11-18 → 2027-11-17 (-1d) | 2027-11-29 → 2027-11-27 (-2d) | -183.02d → -182d |
| RHD4CZ2L102TC2400 | Backfilling of HDPE Ducts for Telecom Network - (RD-L-10/2)-Z2-L102-TC | 2027-12-02 → 2027-12-01 (-1d) | 2027-12-20 → 2027-12-18 (-2d) | -186.02d → -185d |
| 1059 | **RHD4-02-002-L102-(TC)-Telecommunications Manholes** | 2027-11-18 → 2027-11-17 (-1d) | 2027-12-02 → 2027-11-30 (-2d) |  |
| RHD4CZ2L102TC5100 | Excavation for Manholes for Telecom Network - (RD-L-10/2)-Z2-L102-TC | 2027-11-18 → 2027-11-17 (-1d) | 2027-11-25 → 2027-11-23 (-2d) | -186.02d → -185d |
| RHD4CZ2L102TC5200 | Installation of Manholes for Telecom Network - (RD-L-10/2)-Z2-L102-TC | 2027-11-25 → 2027-11-24 (-1d) | 2027-12-02 → 2027-11-30 (-2d) | -186.02d → -185d |
| 1061 | **RHD4-02-002-Z2-L102-Information and Communication Technologies - ICT** | 2027-11-01 → 2027-10-31 (-1d) | 2027-12-20 → 2027-12-18 (-2d) |  |

| ID | Task | Start | Finish | Complete | Total float |
| --- | --- | --- | --- | --- | --- |
| 1062 | **RHD4-02-002-L102-(ICT)-Information and Communication Technologies Ducts** | 2027-11-01 → 2027-10-31 (-1d) | 2027-12-20 → 2027-12-18 (-2d) |  |  |
| RHD4CZ2L102ICT2100 | Excavation of HDPE Ducts for ICT Network - (RD-L-10/2)-Z2-L102-ICT | 2027-11-01 → 2027-10-31 (-1d) | 2027-11-18 → 2027-11-16 (-2d) |  | -186.02d → -185d |
| RHD4CZ2L102ICT2200 | Installation of HDPE Ducts for ICT Network - (RD-L-10/2)-Z2-L102-ICT | 2027-11-18 → 2027-11-17 (-1d) | 2027-11-29 → 2027-11-27 (-2d) |  | -183.02d → -182d |
| RHD4CZ2L102ICT2400 | Backfilling of HDPE Ducts for ICT Network - (RD-L-10/2)-Z2-L102-ICT | 2027-12-02 → 2027-12-01 (-1d) | 2027-12-20 → 2027-12-18 (-2d) |  | -186.02d → -185d |
| 1063 | **RHD4-02-002-L102-(ICT)-Information and Communication Technologies Manholes** | 2027-11-18 → 2027-11-17 (-1d) | 2027-12-02 → 2027-11-30 (-2d) |  |  |
| RHD4CZ2L102ICT5100 | Excavation for Manholes for ICT Network - (RD-L-10/2)-Z2-L102-ICT | 2027-11-18 → 2027-11-17 (-1d) | 2027-11-25 → 2027-11-23 (-2d) |  | -186.02d → -185d |
| RHD4CZ2L102ICT5200 | Installation of Manholes for ICT Network - (RD-L-10/2)-Z2-L102-ICT | 2027-11-25 → 2027-11-24 (-1d) | 2027-12-02 → 2027-11-30 (-2d) |  | -186.02d → -185d |
| 1065 | **RHD4-02-002-Z2-L102-Security Network - CCTV** | 2027-12-20 → 2027-12-19 (-1d) | 2028-02-03 → 2028-02-01 (-2d) |  |  |
| 1066 | **RHD4-02-002-L102-(CCTV)-Civil Works** | 2027-12-20 → 2027-12-19 (-1d) | 2028-01-01 → 2027-12-29 (-3d) |  |  |
| RHD4CZ2L102CCTV2100 | Civil Works for Security Network - (RD-L-10/2)-Z2-L102-CCTV | 2027-12-20 → 2027-12-19 (-1d) | 2028-01-01 → 2027-12-29 (-3d) |  | -186.02d → -185d |
| 1067 | **RHD4-02-002-L102-(CCTV)-CCTV Poles** | 2028-01-01 → 2027-12-30 (-2d) | 2028-01-12 → 2028-01-10 (-2d) |  |  |
| RHD4CZ2L102CCTV1100 | Excavation for RC Base for CCTV Poles for Security Network - (RD-L-10/2)-Z2-L102-CCTV | 2028-01-01 → 2027-12-30 (-2d) | 2028-01-03 → 2028-01-01 (-2d) |  | -186.02d → -185d |
| RHD4CZ2L102CCTV1200 | Installation for RC Base for CCTV Poles for Security Network - (RD-L-10/2)-Z2-L102-CCTV | 2028-01-03 → 2028-01-02 (-1d) | 2028-01-05 → 2028-01-03 (-2d) |  | -186.02d → -185d |
| RHD4CZ2L102CCTV1300 | Backfill for RC Base for CCTV Poles for Security Network - (RD-L-10/2)-Z2-L102-CCTV | 2028-01-05 → 2028-01-04 (-1d) | 2028-01-08 → 2028-01-05 (-3d) |  | -186.02d → -185d |
| RHD4CZ2L102CCTV1400 | Installation for CCTV Poles for Security Network - (RD-L-10/2)-Z2-L102-CCTV | 2028-01-08 → 2028-01-06 (-2d) | 2028-01-10 → 2028-01-08 (-2d) |  | -186.02d → -185d |
| RHD4CZ2L102CCTV1500 | Protection post Installation for CCTV Poles for Security Network - (RD-L-10/2)-Z2-L102-CCTV | 2028-01-10 → 2028-01-09 (-1d) | 2028-01-12 → 2028-01-10 (-2d) |  | -184.02d → -183d |
| 1068 | **RHD4-02-002-L102-(CCTV)-Camera** | 2028-01-15 → 2028-01-13 (-2d) | 2028-01-17 → 2028-01-15 (-2d) |  |  |
| RHD4CZ2L102CCTV3100 | Installation for Cameras for Security Network - (RD-L-10/2)-Z2-L102-CCTV | 2028-01-15 → 2028-01-13 (-2d) | 2028-01-17 → 2028-01-15 (-2d) |  | -186.02d → -185d |
| 1069 | **RHD4-02-002-L102-(CCTV)-Power and Infrastructure** | 2028-01-10 → 2028-01-09 (-1d) | 2028-01-15 → 2028-01-12 (-3d) |  |  |
| RHD4CZ2L102CCTV4100 | Installation of Power outlet, UPS and midspan for PTZ Camerafor Cameras for Security Network - (RD-L-10/2)-Z2-L102-CCTV | 2028-01-10 → 2028-01-09 (-1d) | 2028-01-12 → 2028-01-10 (-2d) |  | -186.02d → -185d |
| RHD4CZ2L102CCTV4200 | Short Range Wireless PoP wireless Bridgefor CCTV Poles for Security Network - (RD-L-10/2)-Z2-L102-CCTV | 2028-01-12 → 2028-01-11 (-1d) | 2028-01-15 → 2028-01-12 (-3d) |  | -186.02d → -185d |
| 1071 | **RHD4-02-002-L102-(CCTV)-CCTV Panels and Components** | 2028-01-17 → 2028-01-16 (-1d) | 2028-02-03 → 2028-02-01 (-2d) |  |  |
| RHD4CZ2L102CCTV6100 | Installation for CCTV Panels for Security Network - (RD-L-10/2)-Z2-L102-CCTV | 2028-01-17 → 2028-01-16 (-1d) | 2028-02-03 → 2028-02-01 (-2d) |  | -186.02d → -185d |
| 1082 | **RHD4-02-002-Z2-L011** |  | 2027-07-06 → 2027-07-01 (-5d) |  |  |
| 1261 | **RHD4-02-002-Z2-L011-Road Works - RD** | 2027-02-21 → 2027-02-13 (-8d) | 2027-07-06 → 2027-07-01 (-5d) |  |  |
| 1262 | **RHD4-02-002-L011-(RD)-Subgrade** | 2027-02-21 → 2027-02-13 (-8d) | 2027-02-23 → 2027-02-14 (-9d) |  |  |
| RHD4CZ2L011RD1100 | Supply, lay and compaction subgrade compacted thickness 300 mm for Roads - (RD-L-11)-Z2-L011-RD | 2027-02-21 → 2027-02-13 (-8d) | 2027-02-23 → 2027-02-14 (-9d) |  | -173d → -166d |
| 1263 | **RHD4-02-002-L011-(RD)-Aggregate Base Course** | 2027-02-24 → 2027-02-15 (-9d) | 2027-02-25 → 2027-02-16 (-9d) |  |  |
| RHD4CZ2L011RD2100 | Supply, lay and compaction Aggregate base course compacted thickness 300 mmfor Roads - (RD-L-11)-Z2-L011-RD | 2027-02-24 → 2027-02-15 (-9d) | 2027-02-25 → 2027-02-16 (-9d) |  | -173d → -166d |
| 1264 | **RHD4-02-002-L011-(RD)-Bituminous base course Two Layers, including (MC1)&(RC2)** | 2027-03-31 → 2027-03-27 (-4d) | 2027-06-26 → 2027-06-21 (-5d) |  |  |
| RHD4CZ2L011RD3100 | Supply, lay and Asphaltic base course including Prime Coat (MC1) for 1st Layer - (RD-L-11)-Z2-L011-RD | 2027-03-31 → 2027-03-27 (-4d) | 2027-04-01 → 2027-03-28 (-4d) |  | -198d → -194d |
| RHD4CZ2L011RD3200 | Supply, lay and Asphaltic base course including Tack Coat (RC2) for 2nd Layer - (RD-L-11)-Z2-L011-RD | 2027-06-24 → 2027-06-20 (-4d) | 2027-06-26 → 2027-06-21 (-5d) |  | -158d → -154d |
| 1266 | **RHD4-02-002-L011-(RD)-Precast Concrete Curb** | 2027-06-27 → 2027-06-22 (-5d) | 2027-06-29 → 2027-06-24 (-5d) |  |  |
| RHD4CZ2L011RD5100 | Supply and installation Precast Concrete Kerb for Roads - (RD-L-11)-Z2-L011-RD | 2027-06-27 → 2027-06-22 (-5d) | 2027-06-29 → 2027-06-24 (-5d) |  | -158d → -154d |
| 1269 | **RHD4-02-002-L011-(RD)-Traffic Signage** | 2027-06-30 → 2027-06-26 (-4d) | 2027-07-06 → 2027-07-01 (-5d) |  |  |
| RHD4CZ2L011RD8100 | Installation of Traffic Signage for Road Network - (RD-L-11)-Z2-L011-RD | 2027-06-30 → 2027-06-26 (-4d) | 2027-07-06 → 2027-07-01 (-5d) |  | -119d → -115d |
| 1265 | **RHD4-02-002-L011-(RD)-Bituminous concrete wearing course including tack coat (RC2)** | 2027-06-30 → 2027-06-26 (-4d) | 2027-07-01 → 2027-06-27 (-4d) |  |  |
| RHD4CZ2L011RD4100 | Supply, lay and compaction Asphaltic wearing course including tack Coat (RC2)for Road Network - (RD-L-11)-Z2-L011-RD | 2027-06-30 → 2027-06-26 (-4d) | 2027-07-01 → 2027-06-27 (-4d) |  | -158d → -154d |
| 1268 | **RHD4-02-002-L011-(RD)-Pavement Marking** | 2027-07-03 → 2027-06-28 (-5d) | 2027-07-04 → 2027-06-29 (-5d) |  |  |
| RHD4CZ2L011RD7100 | Pavement Markings for Road Network - (RD-L-11)-Z2-L011-RD | 2027-07-03 → 2027-06-28 (-5d) | 2027-07-04 → 2027-06-29 (-5d) |  | -158d → -154d |
| 1086 | **RHD4-02-002-Z2-L011-Storm Network - ST** |  | 2027-01-31 → 2027-02-07 (+7d) |  |  |
| 1103 | **RHD4-02-002-L011-(ST)-MH Works - 1200 mm diameter** | 2027-01-04 → 2027-01-11 (+7d) | 2027-01-31 → 2027-02-07 (+7d) |  |  |
| RHD4CZ2L011ST3100 | Excavation and PC Blinding works for MH 1200 mm - (RD-L-11)-Z2-L011-ST | 2027-01-04 → 2027-01-11 (+7d) | 2027-01-05 → 2027-01-12 (+7d) |  | -186d → -192d |
| RHD4CZ2L011ST3200 | Installation of Base for MH 1200 mm - (RD-L-11)-Z2-L011-ST | 2027-01-06 → 2027-01-13 (+7d) | 2027-01-07 → 2027-01-14 (+7d) |  | -186d → -192d |
| RHD4CZ2L011ST3300 | MH Ring and C.Slab works and Backfilling works for MH 1200 mm - (RD-L-11)-Z2-L011-ST | 2027-01-09 → 2027-01-16 (+7d) | 2027-01-10 → 2027-01-17 (+7d) |  | -186d → -192d |
| RHD4CZ2L011ST3400 | Steel Cover for MH 1200 mm - (RD-L-11)-Z2-L011-ST | 2027-01-27 → 2027-02-03 (+7d) | 2027-01-28 → 2027-02-04 (+7d) |  | -186d → -192d |
| RHD4CZ2L011ST3500 | Finishing, Benching, Testing works for MH 1200 mm - (RD-L-11)-Z2-L011-ST | 2027-01-30 → 2027-02-06 (+7d) | 2027-01-31 → 2027-02-07 (+7d) |  | -186d → -192d |
| 1087 | **RHD4-02-002-L011-(ST)-GRP Pipes - 400 mm diameter** |  | 2027-01-24 → 2027-01-31 (+7d) |  |  |
| RHD4CZ2L011ST1100 | Excavation works for GRP Pipe Line 400 mm - (RD-L-11)-Z2-L011-ST |  | 2027-01-14 → 2027-01-21 (+7d) |  | -186d → -192d |
| RHD4CZ2L011ST1200 | Bedding works for GRP Pipe Line 400 mm - (RD-L-11)-Z2-L011-ST | 2027-01-16 → 2027-01-23 (+7d) | 2027-01-17 → 2027-01-24 (+7d) |  | -184d → -190d |
| RHD4CZ2L011ST1300 | Installing for GRP Pipe Line 400 mm - (RD-L-11)-Z2-L011-ST | 2027-01-18 → 2027-01-25 (+7d) | 2027-01-19 → 2027-01-26 (+7d) |  | -184d → -190d |
| RHD4CZ2L011ST1400 | Primary Test for GRP Pipe Line 400 mm - (RD-L-11)-Z2-L011-ST | 2027-01-20 → 2027-01-27 (+7d) | 2027-01-21 → 2027-01-28 (+7d) |  | -184d → -190d |
| RHD4CZ2L011ST1500 | Backfilling and warning tape works for GRP Pipe Line 400 mm - (RD-L-11)-Z2-L011-ST | 2027-01-23 → 2027-01-30 (+7d) | 2027-01-24 → 2027-01-31 (+7d) |  | -184d → -190d |
| 1101 | **RHD4-02-002-L011-(ST)-UPVC Pipes - 300 mm diameter** |  | 2027-01-26 → 2027-02-02 (+7d) |  |  |
| RHD4CZ2L011ST2100 | Excavation works for UPVC Pipe Line 300 mm - (RD-L-11)-Z2-L011-ST |  | 2027-01-17 → 2027-01-24 (+7d) | 90% → 92% | -186d → -192d |
| RHD4CZ2L011ST2300 | Installing for UPVC Pipe Line 300 mm - (RD-L-11)-Z2-L011-ST | 2027-01-20 → 2026-11-07 A (-74d) | 2027-01-21 → 2027-01-28 (+7d) | 0% → 89% | -186d → -192d |
| RHD4CZ2L011ST2200 | Bedding works for UPVC Pipe Line 300 mm - (RD-L-11)-Z2-L011-ST | 2027-01-18 → 2026-11-12 A (-67d) | 2027-01-19 → 2027-01-26 (+7d) | 0% → 88% | -186d → -192d |
| RHD4CZ2L011ST2400 | Primary Test for UPVC Pipe Line 300 mm - (RD-L-11)-Z2-L011-ST | 2027-01-23 → 2027-01-30 (+7d) | 2027-01-24 → 2027-01-31 (+7d) |  | -186d → -192d |
| RHD4CZ2L011ST2500 | Backfilling and warning tape works for UPVC Pipe Line 300 mm - (RD-L-11)-Z2-L011-ST | 2027-01-25 → 2027-02-01 (+7d) | 2027-01-26 → 2027-02-02 (+7d) |  | -186d → -192d |
| 1110 | **RHD4-02-002-Z2-L011-Catch Basin - ST** | 2027-01-11 → 2027-01-18 (+7d) | 2027-01-21 → 2027-01-28 (+7d) |  |  |
| 1111 | **RHD4-02-002-L011-(ST)-Single Catch Basin Works** | 2027-01-11 → 2027-01-18 (+7d) | 2027-01-21 → 2027-01-28 (+7d) |  |  |
| RHD4CZ2L011ST7100 | Excavation works for Single Catch Basin - (RD-L-11)-Z2-L011-ST | 2027-01-11 → 2027-01-18 (+7d) | 2027-01-12 → 2027-01-19 (+7d) |  | -148d → -154d |
| RHD4CZ2L011ST7200 | PC Blinding, Installation and Pipe connection for Single Catch Basin - (RD-L-11)-Z2-L011-ST | 2027-01-13 → 2027-01-20 (+7d) | 2027-01-14 → 2027-01-21 (+7d) |  | -148d → -154d |
| RHD4CZ2L011ST7300 | Rings & C.Slab & Final Backfill for Single Catch Basin - (RD-L-11)-Z2-L011-ST | 2027-01-16 → 2027-01-23 (+7d) | 2027-01-17 → 2027-01-24 (+7d) |  | -148d → -154d |
| RHD4CZ2L011ST7400 | Steel Cover for Single Catch Basin - (RD-L-11)-Z2-L011-ST | 2027-01-18 → 2027-01-25 (+7d) | 2027-01-19 → 2027-01-26 (+7d) |  | -148d → -154d |
| RHD4CZ2L011ST7500 | Finishing and Insulation works for Single Catch Basin - (RD-L-11)-Z2-L011-ST | 2027-01-20 → 2027-01-27 (+7d) | 2027-01-21 → 2027-01-28 (+7d) |  | -148d → -154d |
| 1172 | **RHD4-02-002-Z2-L011-Potable Network - PT** | 2027-02-01 → 2027-02-08 (+7d) | 2027-03-18 → 2027-03-25 (+7d) |  |  |
| 1174 | **RHD4-02-002-L011-(PT)-HDPE Pipes - 160 mm diameter** | 2027-02-01 → 2027-02-08 (+7d) | 2027-02-11 → 2027-02-18 (+7d) |  |  |
| RHD4CZ2L011PT1101 | Excavation works for HDPE Pipline 160 mm - (RD-L-11)-Z2-L011-PT | 2027-02-01 → 2027-02-08 (+7d) | 2027-02-02 → 2027-02-09 (+7d) |  | -186d → -192d |
| RHD4CZ2L011PT1201 | Bedding works for HDPE Pipline 160 mm - (RD-L-11)-Z2-L011-PT | 2027-02-03 → 2027-02-10 (+7d) | 2027-02-04 → 2027-02-11 (+7d) |  | -186d → -192d |

| ID | Task | Start | Finish | Total float |
| --- | --- | --- | --- | --- |
| RHD4CZ2L011PT1301 | Installing for HDPE Pipline 160 mm - (RD-L-11)-Z2-L011-PT | 2027-02-06 → 2027-02-13 (+7d) | 2027-02-07 → 2027-02-14 (+7d) | -186d → -192d |
| RHD4CZ2L011PT1401 | Primary Test for HDPE Pipline 160 mm - (RD-L-11)-Z2-L011-PT | 2027-02-08 → 2027-02-15 (+7d) | 2027-02-09 → 2027-02-16 (+7d) | -186d → -192d |
| RHD4CZ2L011PT1501 | Backfilling and warning tape works for HDPE Pipline 160 mm - (RD-L-11)-Z2-L011-PT | 2027-02-10 → 2027-02-17 (+7d) | 2027-02-11 → 2027-02-18 (+7d) | -186d → -192d |
| 1178 | **RHD4-02-002-L011-(PT)-Gate Valves (Direct Buried)** | 2027-02-13 → 2027-02-20 (+7d) | 2027-02-16 → 2027-02-24 (+8d) |  |
| RHD4CZ2L011PT3100 | Installation for Direct Buried Gate Valves - (RD-L-11)-Z2-L011-PT | 2027-02-13 → 2027-02-20 (+7d) | 2027-02-14 → 2027-02-21 (+7d) | -186d → -192d |
| RHD4CZ2L011PT3200 | Stem and Service box for Direct Buried Gate Valves - (RD-L-11)-Z2-L011-PT | 2027-02-15 → 2027-02-23 (+8d) | 2027-02-16 → 2027-02-24 (+8d) | -186d → -192d |
| 1183 | **RHD4-02-002-L011-(PT)-Air Valve Chambers** | 2027-02-17 → 2027-02-25 (+8d) | 2027-02-27 → 2027-03-06 (+7d) |  |
| RHD4CZ2L011PT2102 | Excavation and Bedding for Air Valve Chambers for Potable Water Network - (RD-L-11)-Z2-L011-PT | 2027-02-17 → 2027-02-25 (+8d) | 2027-02-18 → 2027-02-27 (+9d) | -186d → -192d |
| RHD4CZ2L011PT2202 | PC works for Air Valve Chambers for Potable Water Network - (RD-L-11)-Z2-L011-PT | 2027-02-20 → 2027-02-28 (+8d) | 2027-02-21 → 2027-03-01 (+8d) | -186d → -192d |
| RHD4CZ2L011PT2302 | Installation for Air Valve Chambers for Potable Water Network - (RD-L-11)-Z2-L011-PT | 2027-02-23 → 2027-03-02 (+7d) | 2027-02-24 → 2027-03-03 (+7d) | -186d → -192d |
| RHD4CZ2L011PT2402 | Backfilling works for Air Valve Chambers for Potable Water Network - (RD-L-11)-Z2-L011-PT | 2027-02-25 → 2027-03-04 (+7d) | 2027-02-27 → 2027-03-06 (+7d) | -186d → -192d |
| 1184 | **RHD4-02-002-L011-(PT)-Air Valves** | 2027-02-28 → 2027-03-07 (+7d) | 2027-03-03 → 2027-03-14 (+11d) |  |
| RHD4CZ2L011PT3103 | Installation for Air Valves for Potable Water Network - (RD-L-11)-Z2-L011-PT | 2027-02-28 → 2027-03-07 (+7d) | 2027-03-01 → 2027-03-08 (+7d) | -186d → -192d |
| RHD4CZ2L011PT3203 | Stem and Service box for Air Valves for Potable Water Network - (RD-L-11)-Z2-L011-PT | 2027-03-02 → 2027-03-13 (+11d) | 2027-03-03 → 2027-03-14 (+11d) | -186d → -192d |
| 1185 | **RHD4-02-002-L011-(PT)-Fire Hydrant** | 2027-03-04 → 2027-03-15 (+11d) | 2027-03-18 → 2027-03-25 (+7d) |  |
| RHD4CZ2L011PT4100 | Excavation and Bedding and Pipe Installation for Fire Hydrant - (RD-L-11)-Z2-L011-PT | 2027-03-04 → 2027-03-15 (+11d) | 2027-03-06 → 2027-03-16 (+10d) | -186d → -192d |
| RHD4CZ2L011PT4200 | Valve Installation for Fire Hydrant - (RD-L-11)-Z2-L011-PT | 2027-03-07 → 2027-03-17 (+10d) | 2027-03-08 → 2027-03-18 (+10d) | -186d → -192d |
| RHD4CZ2L011PT4300 | Stem for Fire Hydrant - (RD-L-11)-Z2-L011-PT | 2027-03-13 → 2027-03-20 (+7d) | 2027-03-14 → 2027-03-21 (+7d) | -186d → -192d |
| RHD4CZ2L011PT4400 | Fire Installation for Fire Hydrant - (RD-L-11)-Z2-L011-PT | 2027-03-15 → 2027-03-22 (+7d) | 2027-03-16 → 2027-03-23 (+7d) | -186d → -192d |
| RHD4CZ2L011PT4500 | Protection Barriers for Fire Hydrant - (RD-L-11)-Z2-L011-PT | 2027-03-17 → 2027-03-24 (+7d) | 2027-03-18 → 2027-03-25 (+7d) | -186d → -192d |
| 1221 | **RHD4-02-002-Z2-L011-Medium Voltage Network - MV** | 2027-02-28 → 2027-03-07 (+7d) | 2027-05-06 → 2027-05-02 (-4d) |  |
| 1222 | **RHD4-02-002-L011-(MV)-Medium Voltage cable trench** | 2027-04-03 → 2027-03-29 (-5d) | 2027-04-19 → 2027-04-14 (-5d) |  |
| RHD4CZ2L011MV1100 | Excavation for Medium Voltage Trench - (RD-L-11)-Z2-L011-MV | 2027-04-03 → 2027-03-29 (-5d) | 2027-04-06 → 2027-04-01 (-5d) | -198d → -194d |
| RHD4CZ2L011MV1200 | Trench Backfilling for Medium Voltage Network - (RD-L-11)-Z2-L011-MV | 2027-04-15 → 2027-04-11 (-4d) | 2027-04-19 → 2027-04-14 (-5d) | -198d → -194d |
| 1223 | **RHD4-02-002-L011-(MV)-Medium Voltage duct banks** | 2027-02-28 → 2027-03-07 (+7d) | 2027-03-08 → 2027-03-18 (+10d) |  |
| RHD4CZ2L011MV2100 | Excavation of Duct Banks for Medium Voltage Network - (RD-L-11)-Z2-L011-MV | 2027-02-28 → 2027-03-07 (+7d) | 2027-03-01 → 2027-03-08 (+7d) | -176d → -182d |
| RHD4CZ2L011MV2200 | Installation of Duct Banks for Medium Voltage Network - (RD-L-11)-Z2-L011-MV | 2027-03-02 → 2027-03-13 (+11d) | 2027-03-03 → 2027-03-14 (+11d) | -176d → -182d |
| RHD4CZ2L011MV2300 | Pouring of Duct Banks for Medium Voltage Network - (RD-L-11)-Z2-L011-MV | 2027-03-04 → 2027-03-15 (+11d) | 2027-03-06 → 2027-03-16 (+10d) | -176d → -182d |
| RHD4CZ2L011MV2400 | Backfilling of Duct Banks for Medium Voltage Network - (RD-L-11)-Z2-L011-MV | 2027-03-07 → 2027-03-17 (+10d) | 2027-03-08 → 2027-03-18 (+10d) | -176d → -182d |
| 1224 | **RHD4-02-002-L011-(MV)-Medium Voltage cables 3Cx 500 mm²** | 2027-04-07 → 2027-04-03 (-4d) | 2027-04-21 → 2027-04-17 (-4d) |  |
| RHD4CZ2L011MV3100 | Installation of Medium Voltage Cables 3Cx 500 mm² - (RD-L-11)-Z2-L011-MV | 2027-04-07 → 2027-04-03 (-4d) | 2027-04-12 → 2027-04-07 (-5d) | -198d → -194d |
| RHD4CZ2L011MV3200 | Joints Installation of Medium Voltage Cables 3Cx 500 mm² - (RD-L-11)-Z2-L011-MV | 2027-04-13 → 2027-04-08 (-5d) | 2027-04-14 → 2027-04-10 (-4d) | -198d → -194d |
| RHD4CZ2L011MV3300 | Testing of Medium Voltage Cables 3Cx 500 mm² - (RD-L-11)-Z2-L011-MV | 2027-04-20 → 2027-04-15 (-5d) | 2027-04-21 → 2027-04-17 (-4d) | -198d → -194d |
| 4254 | **RHD4-02-002-L011-(MV)-Unit Substations** | 2027-04-22 → 2027-04-18 (-4d) | 2027-05-06 → 2027-05-02 (-4d) |  |
| RHD4CZ2L011MV5100 | Excavation for Unit Substations for Medium Voltage Network - (RD-L-11)-Z2-L011-MV | 2027-04-22 → 2027-04-18 (-4d) | 2027-04-24 → 2027-04-19 (-5d) | -198d → -194d |
| RHD4CZ2L011MV5200 | Concrete Base Placement for Unit Substations for Medium Voltage Network - (RD-L-11)-Z2-L011-MV | 2027-04-25 → 2027-04-20 (-5d) | 2027-04-26 → 2027-04-21 (-5d) | -198d → -194d |
| RHD4CZ2L011MV5300 | Installation for Fences and doors for Medium Voltage Network - (RD-L-11)-Z2-L011-MV | 2027-04-27 → 2027-04-22 (-5d) | 2027-05-02 → 2027-04-27 (-5d) | -198d → -194d |
| RHD4CZ2L011MV5400 | Installation for Unit Substations for Medium Voltage Network - (RD-L-11)-Z2-L011-MV | 2027-05-03 → 2027-04-28 (-5d) | 2027-05-06 → 2027-05-02 (-4d) | -198d → -194d |
| 1228 | **RHD4-02-002-Z2-L011-Low Voltage Network - LV** | 2027-05-08 → 2027-05-03 (-5d) | 2027-06-20 → 2027-06-15 (-5d) |  |
| 1229 | **RHD4-02-002-L011-(LV)-Low Voltage duct banks** | 2027-05-08 → 2027-05-03 (-5d) | 2027-05-30 → 2027-05-25 (-5d) |  |
| RHD4CZ2L011LV2100 | Excavation of Duct Banks for Low Voltage Network - (RD-L-11)-Z2-L011-LV | 2027-05-08 → 2027-05-03 (-5d) | 2027-05-11 → 2027-05-06 (-5d) | -165d → -161d |
| RHD4CZ2L011LV2200 | Installation of Duct Banks for Low Voltage Network - (RD-L-11)-Z2-L011-LV | 2027-05-12 → 2027-05-08 (-4d) | 2027-05-22 → 2027-05-12 (-10d) | -165d → -161d |
| RHD4CZ2L011LV2300 | Pouring of Duct Banks for Low Voltage Network - (RD-L-11)-Z2-L011-LV | 2027-05-23 → 2027-05-13 (-10d) | 2027-05-26 → 2027-05-22 (-4d) | -165d → -161d |
| RHD4CZ2L011LV2400 | Backfilling of Duct Banks for Low Voltage Network - (RD-L-11)-Z2-L011-LV | 2027-05-27 → 2027-05-23 (-4d) | 2027-05-30 → 2027-05-25 (-5d) | -115d → -111d |
| 1230 | **RHD4-02-002-L011-(LV)-Low Voltage Drawpit** | 2027-05-27 → 2027-05-23 (-4d) | 2027-05-31 → 2027-05-26 (-5d) |  |
| RHD4CZ2L011LV5100 | Excavation of Drawpit size 900x900x1000mm for Low Voltage Network - (RD-L-11)-Z2-L011-LV | 2027-05-27 → 2027-05-23 (-4d) | 2027-05-29 → 2027-05-24 (-5d) | -165d → -161d |
| RHD4CZ2L011LV5200 | Installation of Drawpit size 900x900x1000mm for Low Voltage Network - (RD-L-11)-Z2-L011-LV | 2027-05-30 → 2027-05-25 (-5d) | 2027-05-31 → 2027-05-26 (-5d) | -165d → -161d |
| 1231 | **RHD4-02-002-L011-(LV)-Low Voltage cables** | 2027-05-08 → 2027-05-03 (-5d) | 2027-06-07 → 2027-06-02 (-5d) |  |
| RHD4CZ2L011LV3100 | Excavation for Low Voltage Cables for Low Voltage Network - (RD-L-11)-Z2-L011-LV | 2027-05-08 → 2027-05-03 (-5d) | 2027-05-10 → 2027-05-05 (-5d) | -151d → -147d |
| RHD4CZ2L011LV3200 | Cable Laying of Low Voltage Cables for Low Voltage Network - (RD-L-11)-Z2-L011-LV | 2027-06-01 → 2027-05-27 (-5d) | 2027-06-02 → 2027-05-29 (-4d) | -165d → -161d |
| RHD4CZ2L011LV3300 | Warning tape and Backfill for Low Voltage Cables for Low Voltage Network - (RD-L-11)-Z2-L011-LV | 2027-06-03 → 2027-05-30 (-4d) | 2027-06-05 → 2027-05-31 (-5d) | -165d → -161d |
| RHD4CZ2L011LV3400 | Testing of Low Voltage Cables for Low Voltage Network - (RD-L-11)-Z2-L011-LV | 2027-06-06 → 2027-06-01 (-5d) | 2027-06-07 → 2027-06-02 (-5d) | -165d → -161d |
| 4259 | **RHD4-02-002-L011-(LV)-Low Voltage Distribution Pillars** | 2027-06-08 → 2027-06-03 (-5d) | 2027-06-20 → 2027-06-15 (-5d) |  |
| RHD4CZ2L011LV4100 | Leveling for Distribution Pillars for Low Voltage Network - (RD-L-11)-Z2-L011-LV | 2027-06-08 → 2027-06-03 (-5d) | 2027-06-12 → 2027-06-07 (-5d) | -111d → -107d |
| RHD4CZ2L011LV4200 | Lean Concrete for Distribution Pillars for Low Voltage Network - (RD-L-11)-Z2-L011-LV | 2027-06-13 → 2027-06-08 (-5d) | 2027-06-15 → 2027-06-10 (-5d) | -111d → -107d |
| RHD4CZ2L011LV4300 | Installation of Distribution Pillars for Low Voltage Network - (RD-L-11)-Z2-L011-LV | 2027-06-16 → 2027-06-12 (-4d) | 2027-06-20 → 2027-06-15 (-5d) | -111d → -107d |
| 1234 | **RHD4-02-002-Z2-L011-Street Lighting Network - SL** | 2027-05-08 → 2027-05-03 (-5d) | 2027-06-14 → 2027-06-09 (-5d) |  |
| 1236 | **RHD4-02-002-L011-(SL)-Street Lighting Drawpit** | 2027-05-08 → 2027-05-03 (-5d) | 2027-05-11 → 2027-05-06 (-5d) |  |
| RHD4CZ2L011SL5100 | Excavation of Drawpit size 600x600x900mm for Street Lighting Network - (RD-L-11)-Z2-L011-SL | 2027-05-08 → 2027-05-03 (-5d) | 2027-05-09 → 2027-05-04 (-5d) | -157d → -151d |
| RHD4CZ2L011SL5200 | Installation of Drawpit size 600x600x900mm for Street Lighting Network - (RD-L-11)-Z2-L011-SL | 2027-05-10 → 2027-05-05 (-5d) | 2027-05-11 → 2027-05-06 (-5d) | -157d → -151d |
| 1237 | **RHD4-02-002-L011-(SL)-Street Lighting cables** | 2027-05-19 → 2027-05-10 (-9d) | 2027-06-09 → 2027-06-05 (-4d) |  |
| RHD4CZ2L011SL3100 | Excavation for Street Lighting Cables for Street Lighting Network - (RD-L-11)-Z2-L011-SL | 2027-05-19 → 2027-05-10 (-9d) | 2027-05-23 → 2027-05-13 (-10d) | -158d → -154d |
| RHD4CZ2L011SL3200 | Cable Laying of Street Lighting Cables for Street Lighting Network - (RD-L-11)-Z2-L011-SL | 2027-05-24 → 2027-05-19 (-5d) | 2027-05-26 → 2027-05-22 (-4d) | -158d → -154d |
| RHD4CZ2L011SL3300 | Warning tape and Backfill for Street Lighting Cables for Street Lighting Network - (RD-L-11)-Z2-L011-SL | 2027-05-27 → 2027-05-23 (-4d) | 2027-05-30 → 2027-05-25 (-5d) | -158d → -154d |
| RHD4CZ2L011SL3400 | Testing of Street Lighting Cables for Street Lighting Network - (RD-L-11)-Z2-L011-SL | 2027-06-08 → 2027-06-03 (-5d) | 2027-06-09 → 2027-06-05 (-4d) | -165d → -161d |
| 1238 | **RHD4-02-002-L011-(SL)-Street Lighting Poles** | 2027-05-08 → 2027-05-03 (-5d) | 2027-06-14 → 2027-06-09 (-5d) |  |
| RHD4CZ2L011SL1100 | Excavation for RC Base for Lighting Poles for Street Lighting Network - (RD-L-11)-Z2-L011-SL | 2027-05-08 → 2027-05-03 (-5d) | 2027-05-09 → 2027-05-04 (-5d) | -158d → -154d |
| RHD4CZ2L011SL1200 | Installation for RC Base for Lighting Poles for Street Lighting Network - (RD-L-11)-Z2-L011-SL | 2027-05-10 → 2027-05-05 (-5d) | 2027-05-11 → 2027-05-06 (-5d) | -158d → -154d |
| RHD4CZ2L011SL1300 | Backfill for RC Base for Lighting Poles for Street Lighting Network - (RD-L-11)-Z2-L011-SL | 2027-05-12 → 2027-05-08 (-4d) | 2027-05-13 → 2027-05-09 (-4d) | -158d → -154d |
| RHD4CZ2L011SL1400 | Installation for Lighting Poles for Street Lighting Network - (RD-L-11)-Z2-L011-SL | 2027-06-10 → 2027-06-06 (-4d) | 2027-06-12 → 2027-06-07 (-5d) | -165d → -161d |

| ID | Task | Start | Finish | Total float |
| --- | --- | --- | --- | --- |
| RHD4CZ2L011SL1500 | Luminaire Installation for Lighting Poles for Street Lighting Network - (RD-L-11)-Z2-L011-SL | 2027-06-13 → 2027-06-08 (-5d) | 2027-06-14 → 2027-06-09 (-5d) | -165d → -161d |
| 1246 | **RHD4-02-002-Z2-L011-Telecommunications Network - TC** | 2027-01-27 → 2027-02-03 (+7d) | 2027-06-19 → 2027-06-14 (-5d) |  |
| 1247 | **RHD4-02-002-L011-(TC)-Telecommunications Ducts** | 2027-06-10 → 2027-06-06 (-4d) | 2027-06-19 → 2027-06-14 (-5d) |  |
| RHD4CZ2L011TC2100 | Excavation of HDPE Ducts for Telecom Network - (RD-L-11)-Z2-L011-TC | 2027-06-10 → 2027-06-06 (-4d) | 2027-06-12 → 2027-06-07 (-5d) | -158d → -154d |
| RHD4CZ2L011TC2200 | Installation of HDPE Ducts for Telecom Network - (RD-L-11)-Z2-L011-TC | 2027-06-13 → 2027-06-08 (-5d) | 2027-06-15 → 2027-06-10 (-5d) | -153d → -149d |
| RHD4CZ2L011TC2400 | Backfilling of HDPE Ducts for Telecom Network - (RD-L-11)-Z2-L011-TC | 2027-06-17 → 2027-06-13 (-4d) | 2027-06-19 → 2027-06-14 (-5d) | -154d → -150d |
| 1248 | **RHD4-02-002-L011-(TC)-Telecommunications Manholes** | 2027-06-13 → 2027-06-08 (-5d) | 2027-06-16 → 2027-06-12 (-4d) |  |
| RHD4CZ2L011TC5100 | Excavation for Manholes for Telecom Network - (RD-L-11)-Z2-L011-TC | 2027-06-13 → 2027-06-08 (-5d) | 2027-06-14 → 2027-06-09 (-5d) | -154d → -150d |
| RHD4CZ2L011TC5200 | Installation of Manholes for Telecom Network - (RD-L-11)-Z2-L011-TC | 2027-06-15 → 2027-06-10 (-5d) | 2027-06-16 → 2027-06-12 (-4d) | -154d → -150d |
| 1249 | **RHD4-02-002-L011-(TC)-Telecomminications Road Crossings** | 2027-01-27 → 2027-02-03 (+7d) | 2027-02-04 → 2027-02-11 (+7d) |  |
| RHD4CZ2L011TC3100 | Excavation for Road Crossings for Telecom Network - (RD-L-11)-Z2-L011-TC | 2027-01-27 → 2027-02-03 (+7d) | 2027-01-28 → 2027-02-04 (+7d) | -160d → -166d |
| RHD4CZ2L011TC3200 | Installation of Road Crossings for Telecom Network - (RD-L-11)-Z2-L011-TC | 2027-01-30 → 2027-02-06 (+7d) | 2027-01-31 → 2027-02-07 (+7d) | -160d → -166d |
| RHD4CZ2L011TC3300 | Pouring of Road Crossings for Telecom Network - (RD-L-11)-Z2-L011-TC | 2027-02-01 → 2027-02-08 (+7d) | 2027-02-02 → 2027-02-09 (+7d) | -160d → -166d |
| RHD4CZ2L011TC3400 | Backfilling of Road Crossings for Telecom Network - (RD-L-11)-Z2-L011-TC | 2027-02-03 → 2027-02-10 (+7d) | 2027-02-04 → 2027-02-11 (+7d) | -160d → -166d |
| 1250 | **RHD4-02-002-Z2-L011-Information and Communication Technologies - ICT** | 2027-01-27 → 2027-02-03 (+7d) | 2027-06-23 → 2027-06-19 (-4d) |  |
| 1251 | **RHD4-02-002-L011-(ICT)-Information and Communication Technologies Ducts** | 2027-06-13 → 2027-06-08 (-5d) | 2027-06-23 → 2027-06-19 (-4d) |  |
| RHD4CZ2L011ICT2100 | Excavation of HDPE Ducts for ICT Network - (RD-L-11)-Z2-L011-ICT | 2027-06-13 → 2027-06-08 (-5d) | 2027-06-15 → 2027-06-10 (-5d) | -158d → -154d |
| RHD4CZ2L011ICT2200 | Installation of HDPE Ducts for ICT Network - (RD-L-11)-Z2-L011-ICT | 2027-06-16 → 2027-06-12 (-4d) | 2027-06-20 → 2027-06-15 (-5d) | -158d → -154d |
| RHD4CZ2L011ICT2400 | Backfilling of HDPE Ducts for ICT Network - (RD-L-11)-Z2-L011-ICT | 2027-06-21 → 2027-06-16 (-5d) | 2027-06-23 → 2027-06-19 (-4d) | -158d → -154d |
| 1252 | **RHD4-02-002-L011-(ICT)-Information and Communication Technologies Manholes** | 2027-06-16 → 2027-06-12 (-4d) | 2027-06-20 → 2027-06-15 (-5d) |  |
| RHD4CZ2L011ICT5100 | Excavation for Manholes for ICT Network - (RD-L-11)-Z2-L011-ICT | 2027-06-16 → 2027-06-12 (-4d) | 2027-06-17 → 2027-06-13 (-4d) | -158d → -154d |
| RHD4CZ2L011ICT5200 | Installation of Manholes for ICT Network - (RD-L-11)-Z2-L011-ICT | 2027-06-19 → 2027-06-14 (-5d) | 2027-06-20 → 2027-06-15 (-5d) | -158d → -154d |
| 1253 | **RHD4-02-002-L011-(ICT)-Information and Communication Technologies Road Crossings** | 2027-01-27 → 2027-02-03 (+7d) | 2027-02-20 → 2027-02-11 (-9d) |  |
| RHD4CZ2L011ICT3100 | Excavation for Road Crossings for ICT Network - (RD-L-11)-Z2-L011-ICT | 2027-01-27 → 2027-02-03 (+7d) | 2027-01-28 → 2027-02-04 (+7d) | -160d → -166d |
| RHD4CZ2L011ICT3200 | Installation of Road Crossings for ICT Network - (RD-L-11)-Z2-L011-ICT | 2027-02-14 → 2027-02-06 (-8d) | 2027-02-15 → 2027-02-07 (-8d) | -173d → -166d |
| RHD4CZ2L011ICT3300 | Pouring of Road Crossings for ICT Network - (RD-L-11)-Z2-L011-ICT | 2027-02-16 → 2027-02-08 (-8d) | 2027-02-17 → 2027-02-09 (-8d) | -173d → -166d |
| RHD4CZ2L011ICT3400 | Backfilling of Road Crossings for ICT Network - (RD-L-11)-Z2-L011-ICT | 2027-02-18 → 2027-02-10 (-8d) | 2027-02-20 → 2027-02-11 (-9d) | -173d → -166d |
| 704 | **RHD4-02-002-Z2-C082** |  | 2028-03-23 → 2028-03-21 (-2d) |  |
| 567 | **RHD4-02-002-Z2-C082-Sewage Network - SW** | 2027-03-06 → 2027-03-16 (+10d) | 2027-03-27 → 2027-04-03 (+7d) |  |
| 577 | **RHD4-02-002-C082-(SW)-MH Works - 1200 mm diameter** | 2027-03-06 → 2027-03-16 (+10d) | 2027-03-20 → 2027-03-27 (+7d) |  |
| RHD4CZ2C082SW3100 | Excavation and PC Blinding works for MH 1200 mm - (RD-C-8 /2)-Z2-C082-SW | 2027-03-06 → 2027-03-16 (+10d) | 2027-03-07 → 2027-03-17 (+10d) | -148d → -154d |
| RHD4CZ2C082SW3200 | Installation of Base for MH 1200 mm - (RD-C-8 /2)-Z2-C082-SW | 2027-03-08 → 2027-03-18 (+10d) | 2027-03-13 → 2027-03-20 (+7d) | -148d → -154d |
| RHD4CZ2C082SW3300 | MH Ring and C.Slab works and Backfilling works for MH 1200 mm - (RD-C-8 /2)-Z2-C082-SW | 2027-03-14 → 2027-03-21 (+7d) | 2027-03-15 → 2027-03-22 (+7d) | -148d → -154d |
| RHD4CZ2C082SW3400 | Steel Cover for MH 1200 mm - (RD-C-8 /2)-Z2-C082-SW | 2027-03-16 → 2027-03-23 (+7d) | 2027-03-17 → 2027-03-24 (+7d) | -143d → -147d |
| RHD4CZ2C082SW3500 | Finishing, Benching, Testing works for MH 1200 mm - (RD-C-8 /2)-Z2-C082-SW | 2027-03-18 → 2027-03-25 (+7d) | 2027-03-20 → 2027-03-27 (+7d) | -143d → -147d |
| 573 | **RHD4-02-002-C082-(SW)-UPVC Pipes - 200 mm diameter** | 2027-03-16 → 2027-03-23 (+7d) | 2027-03-27 → 2027-04-03 (+7d) |  |
| RHD4CZ2C082SW2100 | Excavation works for UPVC Pipe Line 200 mm - (RD-C-8 /2)-Z2-C082-SW | 2027-03-16 → 2027-03-23 (+7d) | 2027-03-17 → 2027-03-24 (+7d) | -148d → -154d |
| RHD4CZ2C082SW2200 | Bedding works for UPVC Pipe Line 200 mm - (RD-C-8 /2)-Z2-C082-SW | 2027-03-18 → 2027-03-25 (+7d) | 2027-03-20 → 2027-03-27 (+7d) | -148d → -154d |
| RHD4CZ2C082SW2300 | Installing for UPVC Pipe Line 200 mm - (RD-C-8 /2)-Z2-C082-SW | 2027-03-21 → 2027-03-28 (+7d) | 2027-03-22 → 2027-03-29 (+7d) | -148d → -154d |
| RHD4CZ2C082SW2400 | Primary Test for UPVC Pipe Line 200 mm - (RD-C-8 /2)-Z2-C082-SW | 2027-03-23 → 2027-03-30 (+7d) | 2027-03-24 → 2027-03-31 (+7d) | -148d → -154d |
| RHD4CZ2C082SW2500 | Backfilling and warning tape works for UPVC Pipe Line 200 mm - (RD-C-8 /2)-Z2-C082-SW | 2027-03-25 → 2027-04-01 (+7d) | 2027-03-27 → 2027-04-03 (+7d) | -148d → -154d |
| 883 | **RHD4-02-002-Z2-C082-Road Works - RD** | 2027-01-18 → 2027-01-25 (+7d) | 2028-03-23 → 2028-03-21 (-2d) |  |
| 884 | **RHD4-02-002-C082-(RD)-Subgrade** | 2027-01-18 → 2027-01-25 (+7d) | 2027-01-28 → 2027-02-04 (+7d) |  |
| RHD4CZ2C082RD1100 | Supply, lay and compaction subgrade compacted thickness 300 mm for Roads - (RD-C-8 /2)-Z2-C082-RD | 2027-01-18 → 2027-01-25 (+7d) | 2027-01-28 → 2027-02-04 (+7d) | -134d → -140d |
| 885 | **RHD4-02-002-C082-(RD)-Aggregate Base Course** | 2027-01-30 → 2027-02-06 (+7d) | 2027-02-06 → 2027-02-13 (+7d) |  |
| RHD4CZ2C082RD2100 | Supply, lay and compaction Aggregate base course compacted thickness 300 mmfor Roads - (RD-C-8 /2)-Z2-C082-RD | 2027-01-30 → 2027-02-06 (+7d) | 2027-02-06 → 2027-02-13 (+7d) | -134d → -140d |
| 886 | **RHD4-02-002-C082-(RD)-Bituminous base course Two Layers, including (MC1)&(RC2)** | 2027-02-07 → 2027-02-14 (+7d) | 2027-07-17 → 2027-07-24 (+7d) |  |
| RHD4CZ2C082RD3100 | Supply, lay and Asphaltic base course including Prime Coat (MC1) for 1st Layer - (RD-C-8 /2)-Z2-C082-RD | 2027-02-07 → 2027-02-14 (+7d) | 2027-02-09 → 2027-02-16 (+7d) | -134d → -140d |
| RHD4CZ2C082RD3200 | Supply, lay and Asphaltic base course including Tack Coat (RC2) for 2nd Layer - (RD-C-8 /2)-Z2-C082-RD | 2027-07-14 → 2027-07-21 (+7d) | 2027-07-17 → 2027-07-24 (+7d) | -134d → -140d |
| 888 | **RHD4-02-002-C082-(RD)-Precast Concrete Curb** | 2027-07-18 → 2027-07-25 (+7d) | 2027-07-24 → 2027-07-31 (+7d) |  |
| RHD4CZ2C082RD5100 | Supply and installation Precast Concrete Kerb for Roads - (RD-C-8 /2)-Z2-C082-RD | 2027-07-18 → 2027-07-25 (+7d) | 2027-07-24 → 2027-07-31 (+7d) | -134d → -140d |
| 891 | **RHD4-02-002-C082-(RD)-Traffic Signage** | 2027-07-25 → 2027-08-01 (+7d) | 2027-07-31 → 2027-08-07 (+7d) |  |
| RHD4CZ2C082RD8100 | Installation of Traffic Signage for Road Network - (RD-C-8 /2)-Z2-C082-RD | 2027-07-25 → 2027-08-01 (+7d) | 2027-07-31 → 2027-08-07 (+7d) | -134d → -140d |
| 887 | **RHD4-02-002-C082-(RD)-Bituminous concrete wearing course including tack coat (RC2)** | 2028-03-13 → 2028-03-12 (-1d) | 2028-03-15 → 2028-03-13 (-2d) |  |
| RHD4CZ2C082RD4100 | Supply, lay and compaction Asphaltic wearing course including tack Coat (RC2)for Road Network - (RD-C-8 /2)-Z2-C082-RD | 2028-03-13 → 2028-03-12 (-1d) | 2028-03-15 → 2028-03-13 (-2d) | -177.02d → -176d |
| 890 | **RHD4-02-002-C082-(RD)-Pavement Marking** | 2028-03-15 → 2028-03-14 (-1d) | 2028-03-23 → 2028-03-21 (-2d) |  |
| RHD4CZ2C082RD7100 | Pavement Markings for Road Network - (RD-C-8 /2)-Z2-C082-RD | 2028-03-15 → 2028-03-14 (-1d) | 2028-03-23 → 2028-03-21 (-2d) | -177.02d → -176d |
| 708 | **RHD4-02-002-Z2-C082-Storm Network - ST** |  | 2027-03-20 → 2027-03-27 (+7d) |  |
| 6213 | **RHD4-02-002-C082-(ST)-MH Works - 2000 mm diameter** | 2027-01-11 → 2027-01-18 (+7d) | 2027-01-21 → 2027-01-28 (+7d) |  |
| RHD4CZ2C082ST3102 | Excavation and PC Blinding works for MH 2000 mm - (RD-C-8 /2)-Z2-C082-ST | 2027-01-11 → 2027-01-18 (+7d) | 2027-01-12 → 2027-01-19 (+7d) | -134d → -140d |
| RHD4CZ2C082ST3202 | Installation of Base for MH 2000 mm - (RD-C-8 /2)-Z2-C082-ST | 2027-01-13 → 2027-01-20 (+7d) | 2027-01-14 → 2027-01-21 (+7d) | -134d → -140d |
| RHD4CZ2C082ST3302 | MH Ring and C.Slab works and Backfilling works for MH 2000 mm - (RD-C-8 /2)-Z2-C082-ST | 2027-01-16 → 2027-01-23 (+7d) | 2027-01-17 → 2027-01-24 (+7d) | -134d → -140d |
| RHD4CZ2C082ST3402 | Steel Cover for MH 2000 mm - (RD-C-8 /2)-Z2-C082-ST | 2027-01-18 → 2027-01-25 (+7d) | 2027-01-19 → 2027-01-26 (+7d) | -130d → -136d |
| RHD4CZ2C082ST3502 | Finishing, Benching, Testing works for MH 2000 mm - (RD-C-8 /2)-Z2-C082-ST | 2027-01-20 → 2027-01-27 (+7d) | 2027-01-21 → 2027-01-28 (+7d) | -130d → -136d |
| 525 | **RHD4-02-002-C082-(ST)-GRP Pipes - 1000 mm diameter** |  | 2027-01-12 → 2027-01-19 (+7d) |  |
| RHD4CZ2C082ST1106 | Excavation works for GRP Pipe Line 1000 mm - (RD-C-8 /2)-Z2-C082-ST |  | 2027-01-03 → 2027-01-10 (+7d) | -186d → -192d |
| RHD4CZ2C082ST1206 | Bedding works for GRP Pipe Line 1000 mm - (RD-C-8 /2)-Z2-C082-ST | 2027-01-04 → 2027-01-11 (+7d) | 2027-01-05 → 2027-01-12 (+7d) | -130d → -136d |
| RHD4CZ2C082ST1306 | Installing for GRP Pipe Line 1000 mm - (RD-C-8 /2)-Z2-C082-ST | 2027-01-06 → 2027-01-13 (+7d) | 2027-01-07 → 2027-01-14 (+7d) | -130d → -136d |
| RHD4CZ2C082ST1406 | Primary Test for GRP Pipe Line 1000 mm - (RD-C-8 /2)-Z2-C082-ST | 2027-01-09 → 2027-01-16 (+7d) | 2027-01-10 → 2027-01-17 (+7d) | -130d → -136d |
| RHD4CZ2C082ST1506 | Backfilling and warning tape works for GRP Pipe Line 1000 mm - (RD-C-8 /2)-Z2-C082-ST | 2027-01-11 → 2027-01-18 (+7d) | 2027-01-12 → 2027-01-19 (+7d) | -130d → -136d |

| ID | Task | Start | Finish | Total float |
| --- | --- | --- | --- | --- |
| 725 | **RHD4-02-002-C082-(ST)-MH Works - 1200 mm diameter** |  | 2027-03-17 → 2027-03-24 (+7d) |  |
| RHD4CZ2C082ST3100 | Excavation and PC Blinding works for MH 1200 mm - (RD-C-8 /2)-Z2-C082-ST |  | 2027-01-07 → 2027-01-14 (+7d) | -135d → -141d |
| RHD4CZ2C082ST3200 | Installation of Base for MH 1200 mm - (RD-C-8 /2)-Z2-C082-ST | 2027-01-09 → 2027-01-16 (+7d) | 2027-01-12 → 2027-01-19 (+7d) | -135d → -141d |
| RHD4CZ2C082ST3300 | MH Ring and C.Slab works and Backfilling works for MH 1200 mm - (RD-C-8 /2)-Z2-C082-ST | 2027-01-13 → 2027-01-20 (+7d) | 2027-01-17 → 2027-01-24 (+7d) | -135d → -141d |
| RHD4CZ2C082ST3400 | Steel Cover for MH 1200 mm - (RD-C-8 /2)-Z2-C082-ST | 2027-03-06 → 2027-03-16 (+10d) | 2027-03-13 → 2027-03-20 (+7d) | -143d → -147d |
| RHD4CZ2C082ST3500 | Finishing, Benching, Testing works for MH 1200 mm - (RD-C-8 /2)-Z2-C082-ST | 2027-03-14 → 2027-03-21 (+7d) | 2027-03-17 → 2027-03-24 (+7d) | -143d → -147d |
| 726 | **RHD4-02-002-C082-(ST)-MH Works - 1500 mm diameter** | 2027-01-09 → 2027-01-16 (+7d) | 2027-03-20 → 2027-03-27 (+7d) |  |
| RHD4CZ2C082ST3101 | Excavation and PC Blinding works for MH 1500 mm - (RD-C-8 /2)-Z2-C082-ST | 2027-01-09 → 2027-01-16 (+7d) | 2027-01-10 → 2027-01-17 (+7d) | -134d → -140d |
| RHD4CZ2C082ST3201 | Installation of Base for MH 1500 mm - (RD-C-8 /2)-Z2-C082-ST | 2027-01-13 → 2027-01-20 (+7d) | 2027-01-14 → 2027-01-21 (+7d) | -133d → -139d |
| RHD4CZ2C082ST3301 | MH Ring and C.Slab works and Backfilling works for MH 1500 mm - (RD-C-8 /2)-Z2-C082-ST | 2027-01-18 → 2027-01-25 (+7d) | 2027-01-19 → 2027-01-26 (+7d) | -135d → -141d |
| RHD4CZ2C082ST3401 | Steel Cover for MH 1500 mm - (RD-C-8 /2)-Z2-C082-ST | 2027-03-14 → 2027-03-21 (+7d) | 2027-03-15 → 2027-03-22 (+7d) | -141d → -145d |
| RHD4CZ2C082ST3501 | Finishing, Benching, Testing works for MH 1500 mm - (RD-C-8 /2)-Z2-C082-ST | 2027-03-18 → 2027-03-25 (+7d) | 2027-03-20 → 2027-03-27 (+7d) | -143d → -147d |
| 712 | **RHD4-02-002-C082-(ST)-GRP Pipes - 700 mm diameter** | 2027-01-04 → 2027-01-11 (+7d) | 2027-01-14 → 2027-01-21 (+7d) |  |
| RHD4CZ2C082ST1103 | Excavation works for GRP Pipe Line 700 mm - (RD-C-8 /2)-Z2-C082-ST | 2027-01-04 → 2027-01-11 (+7d) | 2027-01-05 → 2027-01-12 (+7d) | -148d → -154d |
| RHD4CZ2C082ST1203 | Bedding works for GRP Pipe Line 700 mm - (RD-C-8 /2)-Z2-C082-ST | 2027-01-06 → 2027-01-13 (+7d) | 2027-01-07 → 2027-01-14 (+7d) | -148d → -154d |
| RHD4CZ2C082ST1303 | Installing for GRP Pipe Line 700 mm - (RD-C-8 /2)-Z2-C082-ST | 2027-01-09 → 2027-01-16 (+7d) | 2027-01-10 → 2027-01-17 (+7d) | -148d → -154d |
| RHD4CZ2C082ST1403 | Primary Test for GRP Pipe Line 700 mm - (RD-C-8 /2)-Z2-C082-ST | 2027-01-11 → 2027-01-18 (+7d) | 2027-01-12 → 2027-01-19 (+7d) | -148d → -154d |
| RHD4CZ2C082ST1503 | Backfilling and warning tape works for GRP Pipe Line 700 mm - (RD-C-8 /2)-Z2-C082-ST | 2027-01-13 → 2027-01-20 (+7d) | 2027-01-14 → 2027-01-21 (+7d) | -148d → -154d |
| 711 | **RHD4-02-002-C082-(ST)-GRP Pipes - 600 mm diameter** |  | 2027-01-26 → 2027-02-02 (+7d) |  |
| RHD4CZ2C082ST1102 | Excavation works for GRP Pipe Line 600 mm - (RD-C-8 /2)-Z2-C082-ST |  | 2027-01-17 → 2027-01-24 (+7d) | -148d → -154d |
| RHD4CZ2C082ST1202 | Bedding works for GRP Pipe Line 600 mm - (RD-C-8 /2)-Z2-C082-ST |  | 2027-01-19 → 2027-01-26 (+7d) | -148d → -154d |
| RHD4CZ2C082ST1302 | Installing for GRP Pipe Line 600 mm - (RD-C-8 /2)-Z2-C082-ST |  | 2027-01-21 → 2027-01-28 (+7d) | -148d → -154d |
| RHD4CZ2C082ST1402 | Primary Test for GRP Pipe Line 600 mm - (RD-C-8 /2)-Z2-C082-ST | 2027-01-23 → 2027-01-30 (+7d) | 2027-01-24 → 2027-01-31 (+7d) | -148d → -154d |
| RHD4CZ2C082ST1502 | Backfilling and warning tape works for GRP Pipe Line 600 mm - (RD-C-8 /2)-Z2-C082-ST | 2027-01-25 → 2027-02-01 (+7d) | 2027-01-26 → 2027-02-02 (+7d) | -148d → -154d |
| 710 | **RHD4-02-002-C082-(ST)-GRP Pipes - 500 mm diameter** | 2027-01-27 → 2027-02-03 (+7d) | 2027-02-07 → 2027-02-14 (+7d) |  |
| RHD4CZ2C082ST1101 | Excavation works for GRP Pipe Line 500 mm - (RD-C-8 /2)-Z2-C082-ST | 2027-01-27 → 2027-02-03 (+7d) | 2027-01-28 → 2027-02-04 (+7d) | -148d → -154d |
| RHD4CZ2C082ST1201 | Bedding works for GRP Pipe Line 500 mm - (RD-C-8 /2)-Z2-C082-ST | 2027-01-30 → 2027-02-06 (+7d) | 2027-01-31 → 2027-02-07 (+7d) | -148d → -154d |
| RHD4CZ2C082ST1301 | Installing for GRP Pipe Line 500 mm - (RD-C-8 /2)-Z2-C082-ST | 2027-02-01 → 2027-02-08 (+7d) | 2027-02-02 → 2027-02-09 (+7d) | -148d → -154d |
| RHD4CZ2C082ST1401 | Primary Test for GRP Pipe Line 500 mm - (RD-C-8 /2)-Z2-C082-ST | 2027-02-03 → 2027-02-10 (+7d) | 2027-02-04 → 2027-02-11 (+7d) | -148d → -154d |
| RHD4CZ2C082ST1501 | Backfilling and warning tape works for GRP Pipe Line 500 mm - (RD-C-8 /2)-Z2-C082-ST | 2027-02-06 → 2027-02-13 (+7d) | 2027-02-07 → 2027-02-14 (+7d) | -148d → -154d |
| 709 | **RHD4-02-002-C082-(ST)-GRP Pipes - 400 mm diameter** | 2027-02-08 → 2027-02-15 (+7d) | 2027-02-18 → 2027-02-27 (+9d) |  |
| RHD4CZ2C082ST1100 | Excavation works for GRP Pipe Line 400 mm - (RD-C-8 /2)-Z2-C082-ST | 2027-02-08 → 2027-02-15 (+7d) | 2027-02-09 → 2027-02-16 (+7d) | -148d → -154d |
| RHD4CZ2C082ST1200 | Bedding works for GRP Pipe Line 400 mm - (RD-C-8 /2)-Z2-C082-ST | 2027-02-10 → 2027-02-17 (+7d) | 2027-02-11 → 2027-02-18 (+7d) | -148d → -154d |
| RHD4CZ2C082ST1300 | Installing for GRP Pipe Line 400 mm - (RD-C-8 /2)-Z2-C082-ST | 2027-02-13 → 2027-02-20 (+7d) | 2027-02-14 → 2027-02-21 (+7d) | -148d → -154d |
| RHD4CZ2C082ST1400 | Primary Test for GRP Pipe Line 400 mm - (RD-C-8 /2)-Z2-C082-ST | 2027-02-15 → 2027-02-23 (+8d) | 2027-02-16 → 2027-02-24 (+8d) | -148d → -154d |
| RHD4CZ2C082ST1500 | Backfilling and warning tape works for GRP Pipe Line 400 mm - (RD-C-8 /2)-Z2-C082-ST | 2027-02-17 → 2027-02-25 (+8d) | 2027-02-18 → 2027-02-27 (+9d) | -148d → -154d |
| 723 | **RHD4-02-002-C082-(ST)-UPVC Pipes - 300 mm diameter** | 2027-02-20 → 2027-02-28 (+8d) | 2027-03-04 → 2027-03-15 (+11d) |  |
| RHD4CZ2C082ST2100 | Excavation works for UPVC Pipe Line 300 mm - (RD-C-8 /2)-Z2-C082-ST | 2027-02-20 → 2027-02-28 (+8d) | 2027-02-21 → 2027-03-01 (+8d) | -148d → -154d |
| RHD4CZ2C082ST2200 | Bedding works for UPVC Pipe Line 300 mm - (RD-C-8 /2)-Z2-C082-ST | 2027-02-23 → 2027-03-02 (+7d) | 2027-02-24 → 2027-03-03 (+7d) | -148d → -154d |
| RHD4CZ2C082ST2300 | Installing for UPVC Pipe Line 300 mm - (RD-C-8 /2)-Z2-C082-ST | 2027-02-25 → 2027-03-04 (+7d) | 2027-02-27 → 2027-03-06 (+7d) | -148d → -154d |
| RHD4CZ2C082ST2400 | Primary Test for UPVC Pipe Line 300 mm - (RD-C-8 /2)-Z2-C082-ST | 2027-02-28 → 2027-03-07 (+7d) | 2027-03-01 → 2027-03-08 (+7d) | -148d → -154d |
| RHD4CZ2C082ST2500 | Backfilling and warning tape works for UPVC Pipe Line 300 mm - (RD-C-8 /2)-Z2-C082-ST | 2027-03-02 → 2027-03-13 (+11d) | 2027-03-04 → 2027-03-15 (+11d) | -148d → -154d |
| 731 | **RHD4-02-002-C082-(ST)-Concrete Encasement** | 2027-02-25 → 2027-03-04 (+7d) | 2027-02-27 → 2027-03-06 (+7d) |  |
| RHD4CZ2C082ST6100 | Pipe Encasement for Storm Pipelines - (RD-C-8 /2)-Z2-C082-ST | 2027-02-25 → 2027-03-04 (+7d) | 2027-02-27 → 2027-03-06 (+7d) | -146d → -152d |
| 732 | **RHD4-02-002-Z2-C082-Catch Basin - ST** | 2027-01-04 → 2027-01-11 (+7d) | 2027-01-31 → 2027-02-07 (+7d) |  |
| 733 | **RHD4-02-002-C082-(ST)-Single Catch Basin Works** | 2027-01-04 → 2027-01-11 (+7d) | 2027-01-23 → 2027-01-30 (+7d) |  |
| RHD4CZ2C082ST7100 | Excavation works for Single Catch Basin - (RD-C-8 /2)-Z2-C082-ST | 2027-01-04 → 2027-01-11 (+7d) | 2027-01-06 → 2027-01-13 (+7d) | -131d → -137d |
| RHD4CZ2C082ST7200 | PC Blinding, Installation and Pipe connection for Single Catch Basin - (RD-C-8 /2)-Z2-C082-ST | 2027-01-07 → 2027-01-14 (+7d) | 2027-01-10 → 2027-01-17 (+7d) | -131d → -137d |
| RHD4CZ2C082ST7300 | Rings & C.Slab & Final Backfill for Single Catch Basin - (RD-C-8 /2)-Z2-C082-ST | 2027-01-11 → 2027-01-18 (+7d) | 2027-01-13 → 2027-01-20 (+7d) | -131d → -137d |
| RHD4CZ2C082ST7400 | Steel Cover for Single Catch Basin - (RD-C-8 /2)-Z2-C082-ST | 2027-01-14 → 2027-01-21 (+7d) | 2027-01-17 → 2027-01-24 (+7d) | -130d → -136d |
| RHD4CZ2C082ST7500 | Finishing and Insulation works for Single Catch Basin - (RD-C-8 /2)-Z2-C082-ST | 2027-01-18 → 2027-01-25 (+7d) | 2027-01-23 → 2027-01-30 (+7d) | -130d → -136d |
| 734 | **RHD4-02-002-C082-(ST)-Double Catch Basin Works** | 2027-01-20 → 2027-01-27 (+7d) | 2027-01-31 → 2027-02-07 (+7d) |  |
| RHD4CZ2C082ST8100 | Excavation works for Double Catch Basin - (RD-C-8 /2)-Z2-C082-ST | 2027-01-20 → 2027-01-27 (+7d) | 2027-01-21 → 2027-01-28 (+7d) | -135d → -141d |
| RHD4CZ2C082ST8200 | PC Blinding, Installation and Pipe connection for Double Catch Basin - (RD-C-8 /2)-Z2-C082-ST | 2027-01-23 → 2027-01-30 (+7d) | 2027-01-24 → 2027-01-31 (+7d) | -135d → -141d |
| RHD4CZ2C082ST8300 | Rings & C.Slab & Final Backfillfor Double Catch Basin - (RD-C-8 /2)-Z2-C082-ST | 2027-01-25 → 2027-02-01 (+7d) | 2027-01-26 → 2027-02-02 (+7d) | -135d → -141d |
| RHD4CZ2C082ST8400 | Steel Cover for Double Catch Basin - (RD-C-8 /2)-Z2-C082-ST | 2027-01-27 → 2027-02-03 (+7d) | 2027-01-28 → 2027-02-04 (+7d) | -135d → -141d |
| RHD4CZ2C082ST8500 | Finishing and Insulation works for Double Catch Basin - (RD-C-8 /2)-Z2-C082-ST | 2027-01-30 → 2027-02-06 (+7d) | 2027-01-31 → 2027-02-07 (+7d) | -135d → -141d |
| 705 | **RHD4-02-002-Z2-C082-Concrete Box Culvert - ST** | 2027-06-29 → 2027-06-16 (-13d) | 2027-10-31 → 2027-10-17 (-14d) |  |
| 706 | **RHD4-02-002-C082-(ST)-Concrete Box Culvert** | 2027-06-29 → 2027-06-16 (-13d) | 2027-10-31 → 2027-10-17 (-14d) |  |
| RHD4CZ2C082ST4100 | Excavation works for Box Culvert - (RD-C-8 /2)-Z2-C082-ST | 2027-06-29 → 2027-06-16 (-13d) | 2027-07-24 → 2027-07-10 (-14d) | -120.02d → -109d |
| RHD4CZ2C082ST4200 | PC works for Box Culvert - (RD-C-8 /2)-Z2-C082-ST | 2027-07-24 → 2027-07-11 (-13d) | 2027-08-01 → 2027-07-18 (-14d) | -120.02d → -109d |
| RHD4CZ2C082ST4400 | Raft works for Box Culvert - (RD-C-8 /2)-Z2-C082-ST | 2027-08-01 → 2027-07-19 (-13d) | 2027-08-23 → 2027-08-09 (-14d) | -120.02d → -109d |
| RHD4CZ2C082ST4500 | Wall and slab works for Box Culvert - (RD-C-8 /2)-Z2-C082-ST | 2027-08-23 → 2027-08-10 (-13d) | 2027-09-14 → 2027-08-31 (-14d) | -120.02d → -109d |
| RHD4CZ2C082ST4700 | Backfilling works for Box Culvert - (RD-C-8 /2)-Z2-C082-ST | 2027-09-21 → 2027-09-08 (-13d) | 2027-10-12 → 2027-09-28 (-14d) | -120.02d → -109d |
| RHD4CZ2C082ST4600 | Insulation and Testing for Box Culvert - (RD-C-8 /2)-Z2-C082-ST | 2027-10-12 → 2027-09-29 (-13d) | 2027-10-31 → 2027-10-17 (-14d) | -120.02d → -109d |
| 707 | **RHD4-02-002-C082-(ST)-Concrete Chambers** | 2027-09-14 → 2027-09-01 (-13d) | 2027-09-25 → 2027-09-09 (-16d) |  |
| RHD4CZ2C082ST5100 | Excavation and Bedding for Concrete Chambers - for Box Culvert - (RD-C-8 /2)-Z2-C082-ST | 2027-09-14 → 2027-09-01 (-13d) | 2027-09-16 → 2027-09-02 (-14d) | -120.02d → -109d |
| RHD4CZ2C082ST5200 | PC works for Concrete Chambers - for Box Culvert - (RD-C-8 /2)-Z2-C082-ST | 2027-09-16 → 2027-09-04 (-12d) | 2027-09-19 → 2027-09-05 (-14d) | -120.02d → -109d |
| RHD4CZ2C082ST5300 | Installation for Concrete Chambers - for Box Culvert - (RD-C-8 /2)-Z2-C082-ST | 2027-09-19 → 2027-09-06 (-13d) | 2027-09-21 → 2027-09-07 (-14d) | -120.02d → -109d |
| RHD4CZ2C082ST5400 | Backfilling works for Concrete Chambers - for Box Culvert - (RD-C-8 /2)-Z2-C082-ST | 2027-09-21 → 2027-09-08 (-13d) | 2027-09-25 → 2027-09-09 (-16d) | -105.02d → -94d |

| ID | Task | Start | Finish | Total float |
| --- | --- | --- | --- | --- |
| 794 | **RHD4-02-002-Z2-C082-Potable Network - PT** | 2027-03-28 → 2027-04-04 (+7d) | 2027-05-10 → 2027-05-22 (+12d) |  |
| 797 | **RHD4-02-002-C082-(PT)-HDPE Pipes - 200 mm diameter** | 2027-03-28 → 2027-04-04 (+7d) | 2027-05-05 → 2027-05-12 (+7d) |  |
| RHD4CZ2C082PT1102 | Excavation works for HDPE Pipline 200 mm - (RD-C-8 /2)-Z2-C082-PT | 2027-03-28 → 2027-04-04 (+7d) | 2027-04-01 → 2027-04-08 (+7d) | -148d → -154d |
| RHD4CZ2C082PT1202 | Bedding works for HDPE Pipline 200 mm - (RD-C-8 /2)-Z2-C082-PT | 2027-04-03 → 2027-04-10 (+7d) | 2027-04-06 → 2027-04-13 (+7d) | -139d → -145d |
| RHD4CZ2C082PT1302 | Installing for HDPE Pipline 200 mm - (RD-C-8 /2)-Z2-C082-PT | 2027-04-07 → 2027-04-14 (+7d) | 2027-04-14 → 2027-04-21 (+7d) | -139d → -145d |
| RHD4CZ2C082PT1402 | Primary Test for HDPE Pipline 200 mm - (RD-C-8 /2)-Z2-C082-PT | 2027-04-26 → 2027-05-03 (+7d) | 2027-04-28 → 2027-05-05 (+7d) | -139d → -145d |
| RHD4CZ2C082PT1502 | Backfilling and warning tape works for HDPE Pipline 200 mm - (RD-C-8 /2)-Z2-C082-PT | 2027-04-29 → 2027-05-06 (+7d) | 2027-05-05 → 2027-05-12 (+7d) | -139d → -145d |
| 800 | **RHD4-02-002-C082-(PT)-Gate Valves (Direct Buried)** | 2027-04-13 → 2027-04-20 (+7d) | 2027-05-08 → 2027-05-19 (+11d) |  |
| RHD4CZ2C082PT3100 | Installation for Direct Buried Gate Valves - (RD-C-8 /2)-Z2-C082-PT | 2027-04-13 → 2027-04-20 (+7d) | 2027-04-14 → 2027-04-21 (+7d) | -130d → -136d |
| RHD4CZ2C082PT3200 | Stem and Service box for Direct Buried Gate Valves - (RD-C-8 /2)-Z2-C082-PT | 2027-05-06 → 2027-05-13 (+7d) | 2027-05-08 → 2027-05-19 (+11d) | -139d → -145d |
| 808 | **RHD4-02-002-C082-(PT)-Concrete Encasement** | 2027-04-07 → 2027-04-14 (+7d) | 2027-04-25 → 2027-05-02 (+7d) |  |
| RHD4CZ2C082PT5100 | Pipe Encasement for Potable Pipelines - (RD-C-8 /2)-Z2-C082-PT | 2027-04-07 → 2027-04-14 (+7d) | 2027-04-25 → 2027-05-02 (+7d) | -139d → -145d |
| 803 | **RHD4-02-002-C082-(PT)-Wash out Valve Chambers** | 2027-04-03 → 2027-04-10 (+7d) | 2027-05-10 → 2027-05-22 (+12d) |  |
| RHD4CZ2C082PT2101 | Excavation and Bedding for Wash out Valve Chambers for Potable Water Network - (RD-C-8 /2)-Z2-C082-PT | 2027-04-03 → 2027-04-10 (+7d) | 2027-04-04 → 2027-04-11 (+7d) | -114d → -120d |
| RHD4CZ2C082PT2201 | PC works for Wash out Valve Chambers for Potable Water Network - (RD-C-8 /2)-Z2-C082-PT | 2027-04-05 → 2027-04-12 (+7d) | 2027-04-06 → 2027-04-13 (+7d) | -114d → -120d |
| RHD4CZ2C082PT2301 | Installation for Wash out Valve Chambers for Potable Water Network - (RD-C-8 /2)-Z2-C082-PT | 2027-04-07 → 2027-04-14 (+7d) | 2027-04-08 → 2027-04-15 (+7d) | -114d → -120d |
| RHD4CZ2C082PT2401 | Backfilling works for Wash out Valve Chambers for Potable Water Network - (RD-C-8 /2)-Z2-C082-PT | 2027-05-09 → 2027-05-20 (+11d) | 2027-05-10 → 2027-05-22 (+12d) | -139d → -145d |
| 804 | **RHD4-02-002-C082-(PT)-Wash out Valves** | 2027-04-15 → 2027-04-22 (+7d) | 2027-04-19 → 2027-04-26 (+7d) |  |
| RHD4CZ2C082PT3102 | Installation for Wash out Valves for Potable Water Network - (RD-C-8 /2)-Z2-C082-PT | 2027-04-15 → 2027-04-22 (+7d) | 2027-04-17 → 2027-04-24 (+7d) | -138d → -142d |
| RHD4CZ2C082PT3202 | Stem and Service box for Wash out Valves for Potable Water Network - (RD-C-8 /2)-Z2-C082-PT | 2027-04-18 → 2027-04-25 (+7d) | 2027-04-19 → 2027-04-26 (+7d) | -138d → -142d |
| 805 | **RHD4-02-002-C082-(PT)-Air Valve Chambers** | 2027-04-03 → 2027-04-10 (+7d) | 2027-04-11 → 2027-04-18 (+7d) |  |
| RHD4CZ2C082PT2102 | Excavation and Bedding for Air Valve Chambers for Potable Water Network - (RD-C-8 /2)-Z2-C082-PT | 2027-04-03 → 2027-04-10 (+7d) | 2027-04-04 → 2027-04-11 (+7d) | -148d → -154d |
| RHD4CZ2C082PT2202 | PC works for Air Valve Chambers for Potable Water Network - (RD-C-8 /2)-Z2-C082-PT | 2027-04-05 → 2027-04-12 (+7d) | 2027-04-06 → 2027-04-13 (+7d) | -148d → -154d |
| RHD4CZ2C082PT2302 | Installation for Air Valve Chambers for Potable Water Network - (RD-C-8 /2)-Z2-C082-PT | 2027-04-07 → 2027-04-14 (+7d) | 2027-04-08 → 2027-04-15 (+7d) | -148d → -154d |
| RHD4CZ2C082PT2402 | Backfilling works for Air Valve Chambers for Potable Water Network - (RD-C-8 /2)-Z2-C082-PT | 2027-04-10 → 2027-04-17 (+7d) | 2027-04-11 → 2027-04-18 (+7d) | -148d → -154d |
| 806 | **RHD4-02-002-C082-(PT)-Air Valves** | 2027-04-10 → 2027-04-17 (+7d) | 2027-04-13 → 2027-04-20 (+7d) |  |
| RHD4CZ2C082PT3103 | Installation for Air Valves for Potable Water Network - (RD-C-8 /2)-Z2-C082-PT | 2027-04-10 → 2027-04-17 (+7d) | 2027-04-11 → 2027-04-18 (+7d) | -148d → -154d |
| RHD4CZ2C082PT3203 | Stem and Service box for Air Valves for Potable Water Network - (RD-C-8 /2)-Z2-C082-PT | 2027-04-12 → 2027-04-19 (+7d) | 2027-04-13 → 2027-04-20 (+7d) | -148d → -154d |
| 807 | **RHD4-02-002-C082-(PT)-Fire Hydrant** | 2027-04-15 → 2027-04-22 (+7d) | 2027-05-02 → 2027-05-09 (+7d) |  |
| RHD4CZ2C082PT4100 | Excavation and Bedding and Pipe Installation for Fire Hydrant - (RD-C-8 /2)-Z2-C082-PT | 2027-04-15 → 2027-04-22 (+7d) | 2027-04-19 → 2027-04-26 (+7d) | -134d → -140d |
| RHD4CZ2C082PT4200 | Valve Installation for Fire Hydrant - (RD-C-8 /2)-Z2-C082-PT | 2027-04-20 → 2027-04-27 (+7d) | 2027-04-22 → 2027-04-29 (+7d) | -134d → -140d |
| RHD4CZ2C082PT4300 | Stem for Fire Hydrant - (RD-C-8 /2)-Z2-C082-PT | 2027-04-24 → 2027-05-01 (+7d) | 2027-04-26 → 2027-05-03 (+7d) | -134d → -140d |
| RHD4CZ2C082PT4400 | Fire Installation for Fire Hydrant - (RD-C-8 /2)-Z2-C082-PT | 2027-04-27 → 2027-05-04 (+7d) | 2027-04-29 → 2027-05-06 (+7d) | -134d → -140d |
| RHD4CZ2C082PT4500 | Protection Barriers for Fire Hydrant - (RD-C-8 /2)-Z2-C082-PT | 2027-05-01 → 2027-05-08 (+7d) | 2027-05-02 → 2027-05-09 (+7d) | -134d → -140d |
| 809 | **RHD4-02-002-Z2-C082-Irrigation Network - IRR** | 2027-04-03 → 2027-04-10 (+7d) | 2027-05-08 → 2027-05-19 (+11d) |  |
| 814 | **RHD4-02-002-C082-(IRR)-HDPE Pipes - 315 mm diameter** | 2027-04-03 → 2027-04-10 (+7d) | 2027-05-08 → 2027-05-19 (+11d) |  |
| RHD4CZ2C082IRR1104 | Excavation works for HDPE Pipline 315 mm - (RD-C-8 /2)-Z2-C082-IRR | 2027-04-03 → 2027-04-10 (+7d) | 2027-04-11 → 2027-04-18 (+7d) | -148d → -154d |
| RHD4CZ2C082IRR1204 | Bedding works for HDPE Pipline 315 mm - (RD-C-8 /2)-Z2-C082-IRR | 2027-04-12 → 2027-04-19 (+7d) | 2027-04-18 → 2027-04-25 (+7d) | -148d → -154d |
| RHD4CZ2C082IRR1304 | Installing for HDPE Pipline 315 mm - (RD-C-8 /2)-Z2-C082-IRR | 2027-04-19 → 2027-04-26 (+7d) | 2027-04-27 → 2027-05-04 (+7d) | -148d → -154d |
| RHD4CZ2C082IRR1404 | Primary Test for HDPE Pipline 315 mm - (RD-C-8 /2)-Z2-C082-IRR | 2027-04-28 → 2027-05-05 (+7d) | 2027-05-01 → 2027-05-08 (+7d) | -139d → -145d |
| RHD4CZ2C082IRR1504 | Backfilling and warning tape works for HDPE Pipline 315 mm - (RD-C-8 /2)-Z2-C082-IRR | 2027-05-02 → 2027-05-09 (+7d) | 2027-05-08 → 2027-05-19 (+11d) | -139d → -145d |
| 6863 | **RHD4-02-002-C082-(IRR)-HDPE Pipes - 160 mm diameter** | 2027-04-12 → 2027-04-19 (+7d) | 2027-04-22 → 2027-04-29 (+7d) |  |
| RHD4CZ2C082IRR1100 | Excavation works for HDPE Pipline 160 mm - (RD-C-8 /2)-Z2-C082-IRR | 2027-04-12 → 2027-04-19 (+7d) | 2027-04-13 → 2027-04-20 (+7d) | -134d → -140d |
| RHD4CZ2C082IRR1200 | Bedding works for HDPE Pipline 160 mm - (RD-C-8 /2)-Z2-C082-IRR | 2027-04-14 → 2027-04-21 (+7d) | 2027-04-15 → 2027-04-22 (+7d) | -134d → -140d |
| RHD4CZ2C082IRR1300 | Installing for HDPE Pipline 160 mm - (RD-C-8 /2)-Z2-C082-IRR | 2027-04-17 → 2027-04-24 (+7d) | 2027-04-18 → 2027-04-25 (+7d) | -134d → -140d |
| RHD4CZ2C082IRR1400 | Primary Test for HDPE Pipline 160 mm - (RD-C-8 /2)-Z2-C082-IRR | 2027-04-19 → 2027-04-26 (+7d) | 2027-04-20 → 2027-04-27 (+7d) | -134d → -140d |
| RHD4CZ2C082IRR1500 | Backfilling and warning tape works for HDPE Pipline 160 mm - (RD-C-8 /2)-Z2-C082-IRR | 2027-04-21 → 2027-04-28 (+7d) | 2027-04-22 → 2027-04-29 (+7d) | -134d → -140d |
| 818 | **RHD4-02-002-C082-(IRR)-Gate Valves (Direct Buried)** | 2027-04-19 → 2027-04-26 (+7d) | 2027-04-22 → 2027-04-29 (+7d) |  |
| RHD4CZ2C082IRR3100 | Installation for Direct Buried Gate Valves - (RD-C-8 /2)-Z2-C082-IRR | 2027-04-19 → 2027-04-26 (+7d) | 2027-04-20 → 2027-04-27 (+7d) | -148d → -154d |
| RHD4CZ2C082IRR3200 | Stem and Service box for Direct Buried Gate Valves - (RD-C-8 /2)-Z2-C082-IRR | 2027-04-21 → 2027-04-28 (+7d) | 2027-04-22 → 2027-04-29 (+7d) | -148d → -154d |
| 856 | **RHD4-02-002-Z2-C082-Street Lighting Network - SL** | 2027-05-09 → 2027-05-20 (+11d) | 2027-07-07 → 2027-07-14 (+7d) |  |
| 857 | **RHD4-02-002-C082-(SL)-Street Lighting duct banks** | 2027-05-09 → 2027-05-20 (+11d) | 2027-05-29 → 2027-06-05 (+7d) |  |
| RHD4CZ2C082SL2100 | Excavation of Duct Banks for Street Lighting Network - (RD-C-8 /2)-Z2-C082-SL | 2027-05-09 → 2027-05-20 (+11d) | 2027-05-11 → 2027-05-23 (+12d) | -139d → -145d |
| RHD4CZ2C082SL2200 | Installation of Duct Banks for Street Lighting Network - (RD-C-8 /2)-Z2-C082-SL | 2027-05-12 → 2027-05-24 (+12d) | 2027-05-22 → 2027-05-29 (+7d) | -139d → -145d |
| RHD4CZ2C082SL2300 | Pouring of Duct Banks for Street Lighting Network - (RD-C-8 /2)-Z2-C082-SL | 2027-05-23 → 2027-05-30 (+7d) | 2027-05-25 → 2027-06-01 (+7d) | -139d → -145d |
| RHD4CZ2C082SL2400 | Backfilling of Duct Banks for Street Lighting Network - (RD-C-8 /2)-Z2-C082-SL | 2027-05-26 → 2027-06-02 (+7d) | 2027-05-29 → 2027-06-05 (+7d) | -139d → -145d |
| 858 | **RHD4-02-002-C082-(SL)-Street Lighting Drawpit** | 2027-06-02 → 2027-06-09 (+7d) | 2027-06-06 → 2027-06-13 (+7d) |  |
| RHD4CZ2C082SL5100 | Excavation of Drawpit size 600x600x900mm for Street Lighting Network - (RD-C-8 /2)-Z2-C082-SL | 2027-06-02 → 2027-06-09 (+7d) | 2027-06-03 → 2027-06-10 (+7d) | -95d → -101d |
| RHD4CZ2C082SL5200 | Installation of Drawpit size 600x600x900mm for Street Lighting Network - (RD-C-8 /2)-Z2-C082-SL | 2027-06-05 → 2027-06-12 (+7d) | 2027-06-06 → 2027-06-13 (+7d) | -95d → -101d |
| 860 | **RHD4-02-002-C082-(SL)-Street Lighting Poles** | 2027-05-30 → 2027-06-06 (+7d) | 2027-07-07 → 2027-07-14 (+7d) |  |
| RHD4CZ2C082SL1100 | Excavation for RC Base for Lighting Poles for Street Lighting Network - (RD-C-8 /2)-Z2-C082-SL | 2027-05-30 → 2027-06-06 (+7d) | 2027-06-01 → 2027-06-08 (+7d) | -139d → -145d |
| RHD4CZ2C082SL1200 | Installation for RC Base for Lighting Poles for Street Lighting Network - (RD-C-8 /2)-Z2-C082-SL | 2027-06-02 → 2027-06-09 (+7d) | 2027-06-05 → 2027-06-12 (+7d) | -139d → -145d |
| RHD4CZ2C082SL1300 | Backfill for RC Base for Lighting Poles for Street Lighting Network - (RD-C-8 /2)-Z2-C082-SL | 2027-06-06 → 2027-06-13 (+7d) | 2027-06-08 → 2027-06-15 (+7d) | -139d → -145d |
| RHD4CZ2C082SL1400 | Installation for Lighting Poles for Street Lighting Network - (RD-C-8 /2)-Z2-C082-SL | 2027-06-28 → 2027-07-05 (+7d) | 2027-07-01 → 2027-07-08 (+7d) | -139d → -145d |
| RHD4CZ2C082SL1500 | Luminaire Installation for Lighting Poles for Street Lighting Network - (RD-C-8 /2)-Z2-C082-SL | 2027-07-03 → 2027-07-10 (+7d) | 2027-07-07 → 2027-07-14 (+7d) | -139d → -145d |
| 859 | **RHD4-02-002-C082-(SL)-Street Lighting cables** | 2027-06-09 → 2027-06-16 (+7d) | 2027-06-27 → 2027-07-04 (+7d) |  |
| RHD4CZ2C082SL3100 | Excavation for Street Lighting Cables for Street Lighting Network - (RD-C-8 /2)-Z2-C082-SL | 2027-06-09 → 2027-06-16 (+7d) | 2027-06-14 → 2027-06-21 (+7d) | -139d → -145d |
| RHD4CZ2C082SL3200 | Cable Laying of Street Lighting Cables for Street Lighting Network - (RD-C-8 /2)-Z2-C082-SL | 2027-06-15 → 2027-06-22 (+7d) | 2027-06-19 → 2027-06-26 (+7d) | -139d → -145d |
| RHD4CZ2C082SL3300 | Warning tape and Backfill for Street Lighting Cables for Street Lighting Network - (RD-C-8 /2)-Z2-C082-SL | 2027-06-20 → 2027-06-27 (+7d) | 2027-06-23 → 2027-06-30 (+7d) | -139d → -145d |
| RHD4CZ2C082SL3400 | Testing of Street Lighting Cables for Street Lighting Network - (RD-C-8 /2)-Z2-C082-SL | 2027-06-24 → 2027-07-01 (+7d) | 2027-06-27 → 2027-07-04 (+7d) | -139d → -145d |

| ID | Task | Start | Finish | Total float |
| --- | --- | --- | --- | --- |
| 862 | **RHD4-02-002-C082-(SL)-Street Lighting Earthing System** | 2027-07-03 → 2027-07-10 (+7d) | 2027-07-04 → 2027-07-11 (+7d) |  |
| RHD4CZ2C082SL6100 | Installation of Earthing for Lighting Poles and Fedder Pillers for Street Lighting Network - (RD-C-8 /2)-Z2-C082-SL | 2027-07-03 → 2027-07-10 (+7d) | 2027-07-04 → 2027-07-11 (+7d) | -121d → -127d |
| 868 | **RHD4-02-002-Z2-C082-Telecommunications Network - TC** | 2027-04-24 → 2027-05-01 (+7d) | 2027-07-08 → 2027-07-15 (+7d) |  |
| 869 | **RHD4-02-002-C082-(TC)-Telecommunications Ducts** | 2027-04-24 → 2027-05-01 (+7d) | 2027-05-29 → 2027-06-05 (+7d) |  |
| RHD4CZ2C082TC2100 | Excavation of HDPE Ducts for Telecom Network - (RD-C-8 /2)-Z2-C082-TC | 2027-04-24 → 2027-05-01 (+7d) | 2027-05-02 → 2027-05-09 (+7d) | -134d → -140d |
| RHD4CZ2C082TC2200 | Installation of HDPE Ducts for Telecom Network - (RD-C-8 /2)-Z2-C082-TC | 2027-05-03 → 2027-05-10 (+7d) | 2027-05-19 → 2027-05-26 (+7d) | -134d → -140d |
| RHD4CZ2C082TC2400 | Backfilling of HDPE Ducts for Telecom Network - (RD-C-8 /2)-Z2-C082-TC | 2027-05-20 → 2027-05-27 (+7d) | 2027-05-29 → 2027-06-05 (+7d) | -134d → -140d |
| 870 | **RHD4-02-002-C082-(TC)-Telecommunications Manholes** | 2027-07-05 → 2027-07-12 (+7d) | 2027-07-08 → 2027-07-15 (+7d) |  |
| RHD4CZ2C082TC5100 | Excavation for Manholes for Telecom Network - (RD-C-8 /2)-Z2-C082-TC | 2027-07-05 → 2027-07-12 (+7d) | 2027-07-06 → 2027-07-13 (+7d) | -121d → -127d |
| RHD4CZ2C082TC5200 | Installation of Manholes for Telecom Network - (RD-C-8 /2)-Z2-C082-TC | 2027-07-07 → 2027-07-14 (+7d) | 2027-07-08 → 2027-07-15 (+7d) | -121d → -127d |
| 872 | **RHD4-02-002-Z2-C082-Information and Communication Technologies - ICT** | 2027-04-24 → 2027-05-01 (+7d) | 2027-05-26 → 2027-06-02 (+7d) |  |
| 873 | **RHD4-02-002-C082-(ICT)-Information and Communication Technologies Ducts** | 2027-04-24 → 2027-05-01 (+7d) | 2027-05-26 → 2027-06-02 (+7d) |  |
| RHD4CZ2C082ICT2100 | Excavation of HDPE Ducts for ICT Network - (RD-C-8 /2)-Z2-C082-ICT | 2027-04-24 → 2027-05-01 (+7d) | 2027-05-01 → 2027-05-08 (+7d) | -132d → -138d |
| RHD4CZ2C082ICT2200 | Installation of HDPE Ducts for ICT Network - (RD-C-8 /2)-Z2-C082-ICT | 2027-05-02 → 2027-05-09 (+7d) | 2027-05-13 → 2027-05-25 (+12d) | -132d → -138d |
| RHD4CZ2C082ICT2400 | Backfilling of HDPE Ducts for ICT Network - (RD-C-8 /2)-Z2-C082-ICT | 2027-05-19 → 2027-05-26 (+7d) | 2027-05-26 → 2027-06-02 (+7d) | -132d → -138d |
| 874 | **RHD4-02-002-C082-(ICT)-Information and Communication Technologies Manholes** | 2027-05-02 → 2027-05-09 (+7d) | 2027-05-08 → 2027-05-19 (+11d) |  |
| RHD4CZ2C082ICT5100 | Excavation for Manholes for ICT Network - (RD-C-8 /2)-Z2-C082-ICT | 2027-05-02 → 2027-05-09 (+7d) | 2027-05-04 → 2027-05-11 (+7d) | -127d → -133d |
| RHD4CZ2C082ICT5200 | Installation of Manholes for ICT Network - (RD-C-8 /2)-Z2-C082-ICT | 2027-05-05 → 2027-05-12 (+7d) | 2027-05-08 → 2027-05-19 (+11d) | -127d → -133d |
| 876 | **RHD4-02-002-Z2-C082-Security Network - CCTV** | 2027-05-30 → 2027-06-06 (+7d) | 2027-07-13 → 2027-07-20 (+7d) |  |
| 877 | **RHD4-02-002-C082-(CCTV)-Civil Works** | 2027-05-30 → 2027-06-06 (+7d) | 2027-06-09 → 2027-06-16 (+7d) |  |
| RHD4CZ2C082CCTV2100 | Civil Works for Security Network - (RD-C-8 /2)-Z2-C082-CCTV | 2027-05-30 → 2027-06-06 (+7d) | 2027-06-09 → 2027-06-16 (+7d) | -134d → -140d |
| 878 | **RHD4-02-002-C082-(CCTV)-CCTV Poles** | 2027-06-10 → 2027-06-17 (+7d) | 2027-06-21 → 2027-06-28 (+7d) |  |
| RHD4CZ2C082CCTV1100 | Excavation for RC Base for CCTV Poles for Security Network - (RD-C-8 /2)-Z2-C082-CCTV | 2027-06-10 → 2027-06-17 (+7d) | 2027-06-12 → 2027-06-19 (+7d) | -134d → -140d |
| RHD4CZ2C082CCTV1200 | Installation for RC Base for CCTV Poles for Security Network - (RD-C-8 /2)-Z2-C082-CCTV | 2027-06-13 → 2027-06-20 (+7d) | 2027-06-14 → 2027-06-21 (+7d) | -134d → -140d |
| RHD4CZ2C082CCTV1300 | Backfill for RC Base for CCTV Poles for Security Network - (RD-C-8 /2)-Z2-C082-CCTV | 2027-06-15 → 2027-06-22 (+7d) | 2027-06-16 → 2027-06-23 (+7d) | -134d → -140d |
| RHD4CZ2C082CCTV1400 | Installation for CCTV Poles for Security Network - (RD-C-8 /2)-Z2-C082-CCTV | 2027-06-17 → 2027-06-24 (+7d) | 2027-06-19 → 2027-06-26 (+7d) | -134d → -140d |
| RHD4CZ2C082CCTV1500 | Protection post Installation for CCTV Poles for Security Network - (RD-C-8 /2)-Z2-C082-CCTV | 2027-06-20 → 2027-06-27 (+7d) | 2027-06-21 → 2027-06-28 (+7d) | -132d → -138d |
| 879 | **RHD4-02-002-C082-(CCTV)-Camera** | 2027-06-24 → 2027-07-01 (+7d) | 2027-06-26 → 2027-07-03 (+7d) |  |
| RHD4CZ2C082CCTV3100 | Installation for Cameras for Security Network - (RD-C-8 /2)-Z2-C082-CCTV | 2027-06-24 → 2027-07-01 (+7d) | 2027-06-26 → 2027-07-03 (+7d) | -134d → -140d |
| 880 | **RHD4-02-002-C082-(CCTV)-Power and Infrastructure** | 2027-06-20 → 2027-06-27 (+7d) | 2027-06-23 → 2027-06-30 (+7d) |  |
| RHD4CZ2C082CCTV4100 | Installation of Power outlet, UPS and midspan for PTZ Camerafor Cameras for Security Network - (RD-C-8 /2)-Z2-C082-CCTV | 2027-06-20 → 2027-06-27 (+7d) | 2027-06-21 → 2027-06-28 (+7d) | -134d → -140d |
| RHD4CZ2C082CCTV4200 | Short Range Wireless PoP wireless Bridgefor CCTV Poles for Security Network - (RD-C-8 /2)-Z2-C082-CCTV | 2027-06-22 → 2027-06-29 (+7d) | 2027-06-23 → 2027-06-30 (+7d) | -134d → -140d |
| 882 | **RHD4-02-002-C082-(CCTV)-CCTV Panels and Components** | 2027-06-27 → 2027-07-04 (+7d) | 2027-07-13 → 2027-07-20 (+7d) |  |
| RHD4CZ2C082CCTV6100 | Installation for CCTV Panels for Security Network - (RD-C-8 /2)-Z2-C082-CCTV | 2027-06-27 → 2027-07-04 (+7d) | 2027-07-13 → 2027-07-20 (+7d) | -134d → -140d |
| 324 | **RHD4-02-002-Z1** |  | 2028-03-28 → 2028-03-20 (-8d) |  |
| 514 | **RHD4-02-002-Z1-L101** |  | 2028-03-16 → 2028-03-08 (-8d) |  |
| 693 | **RHD4-02-002-Z1-L101-Road Works - RD** | 2027-03-27 → 2027-03-30 (+3d) | 2028-03-16 → 2028-03-08 (-8d) |  |
| 694 | **RHD4-02-002-L101-(RD)-Subgrade** | 2027-03-27 → 2027-03-30 (+3d) | 2027-04-08 → 2027-04-12 (+4d) |  |
| RHD4CZ1L101RD1100 | Supply, lay and compaction subgrade compacted thickness 300 mm for Roads - (RD-L-10/1)-Z1-L101-RD | 2027-03-27 → 2027-03-30 (+3d) | 2027-04-08 → 2027-04-12 (+4d) | -185d → -188d |
| 695 | **RHD4-02-002-L101-(RD)-Aggregate Base Course** | 2027-04-10 → 2027-04-13 (+3d) | 2027-04-19 → 2027-04-22 (+3d) |  |
| RHD4CZ1L101RD2100 | Supply, lay and compaction Aggregate base course compacted thickness 300 mmfor Roads - (RD-L-10/1)-Z1-L101-RD | 2027-04-10 → 2027-04-13 (+3d) | 2027-04-19 → 2027-04-22 (+3d) | -185d → -188d |
| 696 | **RHD4-02-002-L101-(RD)-Bituminous base course Two Layers, including (MC1)&(RC2)** | 2027-04-20 → 2027-04-24 (+4d) | 2028-01-29 → 2028-01-20 (-9d) |  |
| RHD4CZ1L101RD3100 | Supply, lay and Asphaltic base course including Prime Coat (MC1) for 1st Layer - (RD-L-10/1)-Z1-L101-RD | 2027-04-20 → 2027-04-24 (+4d) | 2027-04-21 → 2027-04-25 (+4d) | -185d → -188d |
| RHD4CZ1L101RD3200 | Supply, lay and Asphaltic base course including Tack Coat (RC2) for 2nd Layer - (RD-L-10/1)-Z1-L101-RD | 2028-01-27 → 2028-01-19 (-8d) | 2028-01-29 → 2028-01-20 (-9d) | -180d → -173d |
| 698 | **RHD4-02-002-L101-(RD)-Precast Concrete Curb** | 2028-01-30 → 2028-01-22 (-8d) | 2028-02-05 → 2028-01-27 (-9d) |  |
| RHD4CZ1L101RD5100 | Supply and installation Precast Concrete Kerb for Roads - (RD-L-10/1)-Z1-L101-RD | 2028-01-30 → 2028-01-22 (-8d) | 2028-02-05 → 2028-01-27 (-9d) | -180d → -173d |
| 701 | **RHD4-02-002-L101-(RD)-Traffic Signage** | 2028-02-06 → 2028-01-29 (-8d) | 2028-02-13 → 2028-02-05 (-8d) |  |
| RHD4CZ1L101RD8100 | Installation of Traffic Signage for Road Network - (RD-L-10/1)-Z1-L101-RD | 2028-02-06 → 2028-01-29 (-8d) | 2028-02-13 → 2028-02-05 (-8d) | -180d → -173d |
| 699 | **RHD4-02-002-L101-(RD)-Precast Interlocking Block Pavers** | 2028-02-14 → 2028-02-06 (-8d) | 2028-03-06 → 2028-02-23 (-12d) |  |
| RHD4CZ1L101RD6100 | Interlocking block pavers for sidewalk-footpath for Side walks and Parking areas - (RD-L-10/1)-Z1-L101-RD | 2028-02-14 → 2028-02-06 (-8d) | 2028-03-06 → 2028-02-23 (-12d) | -180d → -173d |
| 697 | **RHD4-02-002-L101-(RD)-Bituminous concrete wearing course including tack coat (RC2)** | 2028-03-07 → 2028-02-24 (-12d) | 2028-03-08 → 2028-02-26 (-11d) |  |
| RHD4CZ1L101RD4100 | Supply, lay and compaction Asphaltic wearing course including tack Coat (RC2)for Road Network - (RD-L-10/1)-Z1-L101-RD | 2028-03-07 → 2028-02-24 (-12d) | 2028-03-08 → 2028-02-26 (-11d) | -180d → -173d |
| 700 | **RHD4-02-002-L101-(RD)-Pavement Marking** | 2028-03-09 → 2028-03-01 (-8d) | 2028-03-16 → 2028-03-08 (-8d) |  |
| RHD4CZ1L101RD7100 | Pavement Markings for Road Network - (RD-L-10/1)-Z1-L101-RD | 2028-03-09 → 2028-03-01 (-8d) | 2028-03-16 → 2028-03-08 (-8d) | -180d → -173d |
| 518 | **RHD4-02-002-Z1-L101-Storm Network - ST** |  | 2027-05-09 → 2027-05-12 (+3d) |  |
| 536 | **RHD4-02-002-L101-(ST)-MH Works - 1500 mm diameter** |  | 2027-04-29 → 2027-05-03 (+4d) |  |
| RHD4CZ1L101ST3101 | Excavation and PC Blinding works for MH 1500 mm - (RD-L-10/1)-Z1-L101-ST |  | 2027-03-21 → 2027-03-24 (+3d) | -157d → -160d |
| RHD4CZ1L101ST3201 | Installation of Base for MH 1500 mm - (RD-L-10/1)-Z1-L101-ST | 2027-03-22 → 2027-03-25 (+3d) | 2027-03-25 → 2027-03-29 (+4d) | -157d → -160d |
| RHD4CZ1L101ST3301 | MH Ring and C.Slab works and Backfilling works for MH 1500 mm - (RD-L-10/1)-Z1-L101-ST | 2027-03-27 → 2027-03-30 (+3d) | 2027-03-30 → 2027-04-03 (+4d) | -157d → -160d |
| RHD4CZ1L101ST3401 | Steel Cover for MH 1500 mm - (RD-L-10/1)-Z1-L101-ST | 2027-04-22 → 2027-04-26 (+4d) | 2027-04-25 → 2027-04-28 (+3d) | -185d → -188d |
| RHD4CZ1L101ST3501 | Finishing, Benching, Testing works for MH 1500 mm - (RD-L-10/1)-Z1-L101-ST | 2027-04-26 → 2027-04-29 (+3d) | 2027-04-29 → 2027-05-03 (+4d) | -185d → -188d |
| 535 | **RHD4-02-002-L101-(ST)-MH Works - 1200 mm diameter** |  | 2027-05-09 → 2027-05-12 (+3d) |  |
| RHD4CZ1L101ST3200 | Installation of Base for MH 1200 mm - (RD-L-10/1)-Z1-L101-ST | 2027-05-01 → 2027-05-04 (+3d) | 2027-05-02 → 2027-05-05 (+3d) | -185d → -188d |
| RHD4CZ1L101ST3300 | MH Ring and C.Slab works and Backfilling works for MH 1200 mm - (RD-L-10/1)-Z1-L101-ST | 2027-05-03 → 2027-05-06 (+3d) | 2027-05-04 → 2027-05-08 (+4d) | -185d → -188d |
| RHD4CZ1L101ST3400 | Steel Cover for MH 1200 mm - (RD-L-10/1)-Z1-L101-ST | 2027-05-05 → 2027-05-09 (+4d) | 2027-05-06 → 2027-05-10 (+4d) | -185d → -188d |
| RHD4CZ1L101ST3500 | Finishing, Benching, Testing works for MH 1200 mm - (RD-L-10/1)-Z1-L101-ST | 2027-05-08 → 2027-05-11 (+3d) | 2027-05-09 → 2027-05-12 (+3d) | -184d → -187d |
| 524 | **RHD4-02-002-L101-(ST)-GRP Pipes - 900 mm diameter** |  | 2027-03-16 → 2027-03-20 (+4d) |  |
| RHD4CZ1L101ST1405 | Primary Test for GRP Pipe Line 900 mm - (RD-L-10/1)-Z1-L101-ST | 2027-03-13 → 2027-03-16 (+3d) | 2027-03-14 → 2027-03-17 (+3d) | -185d → -188d |
| RHD4CZ1L101ST1505 | Backfilling and warning tape works for GRP Pipe Line 900 mm - (RD-L-10/1)-Z1-L101-ST | 2027-03-15 → 2027-03-18 (+3d) | 2027-03-16 → 2027-03-20 (+4d) | -185d → -188d |
| 523 | **RHD4-02-002-L101-(ST)-GRP Pipes - 800 mm diameter** |  | 2027-03-21 → 2027-03-24 (+3d) |  |

| ID | Task | Start | Finish | Complete | Total float |
| --- | --- | --- | --- | --- | --- |
| RHD4CZ1L101ST1404 | Primary Test for GRP Pipe Line 800 mm - (RD-L-10/1)-Z1-L101-ST | 2027-03-17 → 2027-03-21 (+4d) | 2027-03-18 → 2027-03-22 (+4d) |  | -176d → -179d |
| RHD4CZ1L101ST1504 | Backfilling and warning tape works for GRP Pipe Line 800 mm - (RD-L-10/1)-Z1-L101-ST | 2027-03-20 → 2027-03-23 (+3d) | 2027-03-21 → 2027-03-24 (+3d) |  | -176d → -179d |
| 522 | **RHD4-02-002-L101-(ST)-GRP Pipes - 700 mm diameter** |  | 2027-03-25 → 2027-03-29 (+4d) |  |  |
| RHD4CZ1L101ST1403 | Primary Test for GRP Pipe Line 700 mm - (RD-L-10/1)-Z1-L101-ST | 2027-03-22 → 2027-03-25 (+3d) | 2027-03-23 → 2027-03-27 (+4d) |  | -176d → -179d |
| RHD4CZ1L101ST1503 | Backfilling and warning tape works for GRP Pipe Line 700 mm - (RD-L-10/1)-Z1-L101-ST | 2027-03-24 → 2027-03-28 (+4d) | 2027-03-25 → 2027-03-29 (+4d) |  | -176d → -179d |
| 521 | **RHD4-02-002-L101-(ST)-GRP Pipes - 600 mm diameter** |  | 2027-03-30 → 2027-04-03 (+4d) |  |  |
| RHD4CZ1L101ST1402 | Primary Test for GRP Pipe Line 600 mm - (RD-L-10/1)-Z1-L101-ST | 2027-03-27 → 2027-03-30 (+3d) | 2027-03-28 → 2027-03-31 (+3d) |  | -176d → -179d |
| RHD4CZ1L101ST1502 | Backfilling and warning tape works for GRP Pipe Line 600 mm - (RD-L-10/1)-Z1-L101-ST | 2027-03-29 → 2027-04-01 (+3d) | 2027-03-30 → 2027-04-03 (+4d) |  | -176d → -179d |
| 520 | **RHD4-02-002-L101-(ST)-GRP Pipes - 500 mm diameter** |  | 2027-04-01 → 2027-04-05 (+4d) |  |  |
| RHD4CZ1L101ST1401 | Primary Test for GRP Pipe Line 500 mm - (RD-L-10/1)-Z1-L101-ST | 2027-03-27 → 2027-03-30 (+3d) | 2027-03-28 → 2027-03-31 (+3d) |  | -174d → -177d |
| RHD4CZ1L101ST1501 | Backfilling and warning tape works for GRP Pipe Line 500 mm - (RD-L-10/1)-Z1-L101-ST | 2027-03-31 → 2027-04-04 (+4d) | 2027-04-01 → 2027-04-05 (+4d) |  | -176d → -179d |
| 519 | **RHD4-02-002-L101-(ST)-GRP Pipes - 400 mm diameter** |  | 2027-04-13 → 2027-04-14 (+1d) |  |  |
| RHD4CZ1L101ST1400 | Primary Test for GRP Pipe Line 400 mm - (RD-L-10/1)-Z1-L101-ST | 2027-04-03 → 2027-04-07 (+4d) | 2027-04-04 → 2027-04-08 (+4d) |  | -178d → -182d |
| RHD4CZ1L101ST1500 | Backfilling and warning tape works for GRP Pipe Line 400 mm - (RD-L-10/1)-Z1-L101-ST | 2027-04-12 → 2027-04-13 (+1d) | 2027-04-13 → 2027-04-14 (+1d) |  | -184d → -185d |
| 533 | **RHD4-02-002-L101-(ST)-UPVC Pipes - 300 mm diameter** |  | 2027-04-26 → 2027-04-28 (+2d) |  |  |
| RHD4CZ1L101ST2100 | Excavation works for UPVC Pipe Line 300 mm - (RD-L-10/1)-Z1-L101-ST |  | 2027-04-15 → 2027-04-17 (+2d) | 80% → 90% | -184d → -185d |
| RHD4CZ1L101ST2300 | Installing for UPVC Pipe Line 300 mm - (RD-L-10/1)-Z1-L101-ST | 2027-04-19 → 2026-11-07 A (-163d) | 2027-04-20 → 2027-04-21 (+1d) | 0% → 28% | -184d → -185d |
| RHD4CZ1L101ST2200 | Bedding works for UPVC Pipe Line 300 mm - (RD-L-10/1)-Z1-L101-ST | 2027-04-17 → 2026-11-12 A (-156d) | 2027-04-18 → 2027-04-19 (+1d) | 0% → 28% | -184d → -185d |
| RHD4CZ1L101ST2400 | Primary Test for UPVC Pipe Line 300 mm - (RD-L-10/1)-Z1-L101-ST | 2027-04-21 → 2027-04-22 (+1d) | 2027-04-22 → 2027-04-24 (+2d) |  | -179d → -180d |
| RHD4CZ1L101ST2500 | Backfilling and warning tape works for UPVC Pipe Line 300 mm - (RD-L-10/1)-Z1-L101-ST | 2027-04-24 → 2027-04-26 (+2d) | 2027-04-26 → 2027-04-28 (+2d) |  | -179d → -181d |
| 541 | **RHD4-02-002-L101-(ST)-Concrete Encasement** | 2027-04-20 → 2027-04-24 (+4d) | 2027-04-21 → 2027-04-25 (+4d) |  |  |
| RHD4CZ1L101ST6100 | Pipe Encasement for Storm Pipelines - (RD-L-10/1)-Z1-L101-ST | 2027-04-20 → 2027-04-24 (+4d) | 2027-04-21 → 2027-04-25 (+4d) |  | -185d → -188d |
| 542 | **RHD4-02-002-Z1-L101-Catch Basin - ST** |  | 2027-05-22 → 2027-05-25 (+3d) |  |  |
| 543 | **RHD4-02-002-L101-(ST)-Single Catch Basin Works** |  | 2027-05-22 → 2027-05-25 (+3d) |  |  |
| RHD4CZ1L101ST7200 | PC Blinding, Installation and Pipe connection for Single Catch Basin - (RD-L-10/1)-Z1-L101-ST | 2027-02-23 → 2027-03-02 (+7d) | 2027-02-25 → 2027-03-04 (+7d) |  | -168d → -174d |
| RHD4CZ1L101ST7300 | Rings & C.Slab & Final Backfill for Single Catch Basin - (RD-L-10/1)-Z1-L101-ST | 2027-02-27 → 2027-03-06 (+7d) | 2027-03-02 → 2027-03-13 (+11d) |  | -168d → -174d |
| RHD4CZ1L101ST7400 | Steel Cover for Single Catch Basin - (RD-L-10/1)-Z1-L101-ST | 2027-05-08 → 2027-05-11 (+3d) | 2027-05-10 → 2027-05-13 (+3d) |  | -185d → -188d |
| RHD4CZ1L101ST7500 | Finishing and Insulation works for Single Catch Basin - (RD-L-10/1)-Z1-L101-ST | 2027-05-11 → 2027-05-19 (+8d) | 2027-05-22 → 2027-05-25 (+3d) |  | -185d → -188d |
| 567 | **RHD4-02-002-Z1-L101-Sewage Network - SW** |  | 2027-07-10 → 2027-07-12 (+2d) |  |  |
| 577 | **RHD4-02-002-L101-(SW)-MH Works - 1200 mm diameter** |  | 2027-07-10 → 2027-07-12 (+2d) |  |  |
| RHD4CZ1L101SW3100 | Excavation and PC Blinding works for MH 1200 mm - (RD-L-10/1)-Z1-L101-SW |  | 2027-05-09 → 2027-05-11 (+2d) |  | -138d → -140d |
| RHD4CZ1L101SW3200 | Installation of Base for MH 1200 mm - (RD-L-10/1)-Z1-L101-SW | 2027-05-10 → 2027-05-12 (+2d) | 2027-05-30 → 2027-06-01 (+2d) |  | -138d → -140d |
| RHD4CZ1L101SW3300 | MH Ring and C.Slab works and Backfilling works for MH 1200 mm - (RD-L-10/1)-Z1-L101-SW | 2027-05-31 → 2027-06-02 (+2d) | 2027-06-15 → 2027-06-17 (+2d) |  | -138d → -140d |
| RHD4CZ1L101SW3400 | Steel Cover for MH 1200 mm - (RD-L-10/1)-Z1-L101-SW | 2027-06-16 → 2027-06-19 (+3d) | 2027-06-23 → 2027-06-26 (+3d) |  | -138d → -140d |
| RHD4CZ1L101SW3500 | Finishing, Benching, Testing works for MH 1200 mm - (RD-L-10/1)-Z1-L101-SW | 2027-06-24 → 2027-06-27 (+3d) | 2027-07-10 → 2027-07-12 (+2d) |  | -138d → -140d |
| 573 | **RHD4-02-002-L101-(SW)-UPVC Pipes - 200 mm diameter** |  | 2027-06-23 → 2027-06-15 (-8d) |  |  |
| RHD4CZ1L101SW2100 | Excavation works for UPVC Pipe Line 200 mm - (RD-L-10/1)-Z1-L101-SW |  | 2027-05-03 → 2027-05-05 (+2d) |  | -179d → -181d |
| RHD4CZ1L101SW2200 | Bedding works for UPVC Pipe Line 200 mm - (RD-L-10/1)-Z1-L101-SW |  | 2027-05-10 → 2027-05-12 (+2d) |  | -179d → -181d |
| RHD4CZ1L101SW2300 | Installing for UPVC Pipe Line 200 mm - (RD-L-10/1)-Z1-L101-SW |  | 2027-05-23 → 2027-05-25 (+2d) |  | -179d → -181d |
| RHD4CZ1L101SW2400 | Primary Test for UPVC Pipe Line 200 mm - (RD-L-10/1)-Z1-L101-SW | 2027-06-13 → 2027-06-05 (-8d) | 2027-06-16 → 2027-06-08 (-8d) |  | -196d → -189d |
| RHD4CZ1L101SW2500 | Backfilling and warning tape works for UPVC Pipe Line 200 mm - (RD-L-10/1)-Z1-L101-SW | 2027-06-17 → 2027-06-09 (-8d) | 2027-06-23 → 2027-06-15 (-8d) |  | -196d → -189d |
| 604 | **RHD4-02-002-Z1-L101-Potable Network - PT** | 2027-06-24 → 2027-06-16 (-8d) | 2027-07-28 → 2027-07-20 (-8d) |  |  |
| 606 | **RHD4-02-002-L101-(PT)-HDPE Pipes - 160 mm diameter** | 2027-06-24 → 2027-06-16 (-8d) | 2027-07-17 → 2027-07-08 (-9d) |  |  |
| RHD4CZ1L101PT1101 | Excavation works for HDPE Pipline 160 mm - (RD-L-10/1)-Z1-L101-PT | 2027-06-24 → 2027-06-16 (-8d) | 2027-06-28 → 2027-06-20 (-8d) |  | -196d → -189d |
| RHD4CZ1L101PT1201 | Bedding works for HDPE Pipline 160 mm - (RD-L-10/1)-Z1-L101-PT | 2027-06-29 → 2027-06-21 (-8d) | 2027-07-01 → 2027-06-23 (-8d) |  | -196d → -189d |
| RHD4CZ1L101PT1301 | Installing for HDPE Pipline 160 mm - (RD-L-10/1)-Z1-L101-PT | 2027-07-03 → 2027-06-24 (-9d) | 2027-07-08 → 2027-06-30 (-8d) |  | -196d → -189d |
| RHD4CZ1L101PT1401 | Primary Test for HDPE Pipline 160 mm - (RD-L-10/1)-Z1-L101-PT | 2027-07-10 → 2027-07-01 (-9d) | 2027-07-11 → 2027-07-03 (-8d) |  | -196d → -189d |
| RHD4CZ1L101PT1501 | Backfilling and warning tape works for HDPE Pipline 160 mm - (RD-L-10/1)-Z1-L101-PT | 2027-07-12 → 2027-07-04 (-8d) | 2027-07-17 → 2027-07-08 (-9d) |  | -196d → -189d |
| 605 | **RHD4-02-002-L101-(PT)-HDPE Pipes - 110 mm diameter** | 2027-06-24 → 2027-06-16 (-8d) | 2027-07-19 → 2027-07-11 (-8d) |  |  |
| RHD4CZ1L101PT1100 | Excavation works for HDPE Pipline 110 mm - (RD-L-10/1)-Z1-L101-PT | 2027-06-24 → 2027-06-16 (-8d) | 2027-06-26 → 2027-06-17 (-9d) |  | -184d → -177d |
| RHD4CZ1L101PT1200 | Bedding works for HDPE Pipline 110 mm - (RD-L-10/1)-Z1-L101-PT | 2027-07-03 → 2027-06-24 (-9d) | 2027-07-04 → 2027-06-26 (-8d) |  | -189d → -182d |
| RHD4CZ1L101PT1300 | Installing for HDPE Pipline 110 mm - (RD-L-10/1)-Z1-L101-PT | 2027-07-10 → 2027-07-01 (-9d) | 2027-07-11 → 2027-07-03 (-8d) |  | -193d → -186d |
| RHD4CZ1L101PT1400 | Primary Test for HDPE Pipline 110 mm - (RD-L-10/1)-Z1-L101-PT | 2027-07-12 → 2027-07-04 (-8d) | 2027-07-13 → 2027-07-05 (-8d) |  | -193d → -186d |
| RHD4CZ1L101PT1500 | Backfilling and warning tape works for HDPE Pipline 110 mm - (RD-L-10/1)-Z1-L101-PT | 2027-07-18 → 2027-07-10 (-8d) | 2027-07-19 → 2027-07-11 (-8d) |  | -196d → -189d |
| 421 | **RHD4-02-002-L101-(PT)-Gate Valves (Direct Buried)** | 2027-07-20 → 2027-07-12 (-8d) | 2027-07-28 → 2027-07-20 (-8d) |  |  |
| RHD4CZ1L101PT3100 | Installation for Direct Buried Gate Valves - (RD-L-10/1)-Z1-L101-PT | 2027-07-20 → 2027-07-12 (-8d) | 2027-07-24 → 2027-07-15 (-9d) |  | -196d → -189d |
| RHD4CZ1L101PT3200 | Stem and Service box for Direct Buried Gate Valves - (RD-L-10/1)-Z1-L101-PT | 2027-07-25 → 2027-07-17 (-8d) | 2027-07-28 → 2027-07-20 (-8d) |  | -196d → -189d |
| 428 | **RHD4-02-002-L101-(PT)-Fire Hydrant** | 2027-06-24 → 2027-06-16 (-8d) | 2027-07-18 → 2027-07-10 (-8d) |  |  |
| RHD4CZ1L101PT4100 | Excavation and Bedding and Pipe Installation for Fire Hydrant - (RD-L-10/1)-Z1-L101-PT | 2027-06-24 → 2027-06-16 (-8d) | 2027-06-30 → 2027-06-22 (-8d) |  | -166d → -159d |
| RHD4CZ1L101PT4200 | Valve Installation for Fire Hydrant - (RD-L-10/1)-Z1-L101-PT | 2027-07-01 → 2027-06-23 (-8d) | 2027-07-05 → 2027-06-27 (-8d) |  | -166d → -159d |
| RHD4CZ1L101PT4300 | Stem for Fire Hydrant - (RD-L-10/1)-Z1-L101-PT | 2027-07-06 → 2027-06-28 (-8d) | 2027-07-10 → 2027-07-01 (-9d) |  | -166d → -159d |
| RHD4CZ1L101PT4400 | Fire Installation for Fire Hydrant - (RD-L-10/1)-Z1-L101-PT | 2027-07-11 → 2027-07-03 (-8d) | 2027-07-14 → 2027-07-06 (-8d) |  | -166d → -159d |
| RHD4CZ1L101PT4500 | Protection Barriers for Fire Hydrant - (RD-L-10/1)-Z1-L101-PT | 2027-07-15 → 2027-07-07 (-8d) | 2027-07-18 → 2027-07-10 (-8d) |  | -166d → -159d |
| 619 | **RHD4-02-002-Z1-L101-Irrigation Network - IRR** | 2027-07-29 → 2027-07-21 (-8d) | 2027-08-31 → 2027-08-23 (-8d) |  |  |
| 6107 | **RHD4-02-002-L101-(IRR)-HDPE Pipes - 160 mm diameter** | 2027-08-05 → 2027-07-28 (-8d) | 2027-08-18 → 2027-08-10 (-8d) |  |  |
| RHD4CZ1L101IRR1100 | Excavation works for HDPE Pipline 160 mm - (RD-L-10/1)-Z1-L101-IRR | 2027-08-05 → 2027-07-28 (-8d) | 2027-08-08 → 2027-07-31 (-8d) |  | -195d → -188d |
| RHD4CZ1L101IRR1200 | Bedding works for HDPE Pipline 160 mm - (RD-L-10/1)-Z1-L101-IRR | 2027-08-09 → 2027-08-01 (-8d) | 2027-08-10 → 2027-08-02 (-8d) |  | -195d → -188d |
| RHD4CZ1L101IRR1300 | Installing for HDPE Pipline 160 mm - (RD-L-10/1)-Z1-L101-IRR | 2027-08-11 → 2027-08-03 (-8d) | 2027-08-14 → 2027-08-05 (-9d) |  | -195d → -188d |
| RHD4CZ1L101IRR1400 | Primary Test for HDPE Pipline 160 mm - (RD-L-10/1)-Z1-L101-IRR | 2027-08-15 → 2027-08-07 (-8d) | 2027-08-16 → 2027-08-08 (-8d) |  | -195d → -188d |
| RHD4CZ1L101IRR1500 | Backfilling and warning tape works for HDPE Pipline 160 mm - (RD-L-10/1)-Z1-L101-IRR | 2027-08-17 → 2027-08-09 (-8d) | 2027-08-18 → 2027-08-10 (-8d) |  | -195d → -188d |

| ID | Task | Start | Finish | Total float |
| --- | --- | --- | --- | --- |
| 6116 | **RHD4-02-002-L101-(IRR)-Butterfly Valve Chamber** | 2027-08-09 → 2027-08-01 (-8d) | 2027-08-17 → 2027-08-09 (-8d) |  |
| RHD4CZ1L101IRR2100 | Excavation and Bedding for Butterfly Valve Chamber for Irrigation Network - (RD-L-10/1)-Z1-L101-IRR | 2027-08-09 → 2027-08-01 (-8d) | 2027-08-10 → 2027-08-02 (-8d) | -191d → -184d |
| RHD4CZ1L101IRR2200 | PC works for Butterfly Valve Chamber for Irrigation Network - (RD-L-10/1)-Z1-L101-IRR | 2027-08-11 → 2027-08-03 (-8d) | 2027-08-12 → 2027-08-04 (-8d) | -191d → -184d |
| RHD4CZ1L101IRR2300 | Installation for Butterfly Valve Chamber for Irrigation Network - (RD-L-10/1)-Z1-L101-IRR | 2027-08-14 → 2027-08-05 (-9d) | 2027-08-15 → 2027-08-07 (-8d) | -191d → -184d |
| RHD4CZ1L101IRR2400 | Backfilling works for Butterfly Valve Chamber for Irrigation Network - (RD-L-10/1)-Z1-L101-IRR | 2027-08-16 → 2027-08-08 (-8d) | 2027-08-17 → 2027-08-09 (-8d) | -191d → -184d |
| 6117 | **RHD4-02-002-L101-(IRR)-Butterfly Valves** | 2027-08-16 → 2027-08-08 (-8d) | 2027-08-19 → 2027-08-11 (-8d) |  |
| RHD4CZ1L101IRR3101 | Installation for Butterfly Valves for Irrigation Network - (RD-L-10/1)-Z1-L101-IRR | 2027-08-16 → 2027-08-08 (-8d) | 2027-08-17 → 2027-08-09 (-8d) | -191d → -184d |
| RHD4CZ1L101IRR3201 | Stem and Service box for Butterfly Valves for Irrigation Network - (RD-L-10/1)-Z1-L101-IRR | 2027-08-18 → 2027-08-10 (-8d) | 2027-08-19 → 2027-08-11 (-8d) | -191d → -184d |
| 624 | **RHD4-02-002-L101-(IRR)-HDPE Pipes - 315 mm diameter** | 2027-07-29 → 2027-07-21 (-8d) | 2027-08-25 → 2027-08-17 (-8d) |  |
| RHD4CZ1L101IRR1104 | Excavation works for HDPE Pipline 315 mm - (RD-L-10/1)-Z1-L101-IRR | 2027-07-29 → 2027-07-21 (-8d) | 2027-08-04 → 2027-07-27 (-8d) | -196d → -189d |
| RHD4CZ1L101IRR1204 | Bedding works for HDPE Pipline 315 mm - (RD-L-10/1)-Z1-L101-IRR | 2027-08-05 → 2027-07-28 (-8d) | 2027-08-10 → 2027-08-02 (-8d) | -196d → -189d |
| RHD4CZ1L101IRR1304 | Installing for HDPE Pipline 315 mm - (RD-L-10/1)-Z1-L101-IRR | 2027-08-11 → 2027-08-03 (-8d) | 2027-08-17 → 2027-08-09 (-8d) | -196d → -189d |
| RHD4CZ1L101IRR1404 | Primary Test for HDPE Pipline 315 mm - (RD-L-10/1)-Z1-L101-IRR | 2027-08-18 → 2027-08-10 (-8d) | 2027-08-19 → 2027-08-11 (-8d) | -196d → -189d |
| RHD4CZ1L101IRR1504 | Backfilling and warning tape works for HDPE Pipline 315 mm - (RD-L-10/1)-Z1-L101-IRR | 2027-08-21 → 2027-08-12 (-9d) | 2027-08-25 → 2027-08-17 (-8d) | -196d → -189d |
| 628 | **RHD4-02-002-L101-(IRR)-Gate Valves (Direct Buried)** | 2027-08-18 → 2027-08-10 (-8d) | 2027-08-31 → 2027-08-23 (-8d) |  |
| RHD4CZ1L101IRR3100 | Installation for Direct Buried Gate Valves - (RD-L-10/1)-Z1-L101-IRR | 2027-08-18 → 2027-08-10 (-8d) | 2027-08-24 → 2027-08-16 (-8d) | -194d → -187d |
| RHD4CZ1L101IRR3200 | Stem and Service box for Direct Buried Gate Valves - (RD-L-10/1)-Z1-L101-IRR | 2027-08-25 → 2027-08-17 (-8d) | 2027-08-31 → 2027-08-23 (-8d) | -194d → -187d |
| 653 | **RHD4-02-002-Z1-L101-Medium Voltage Network - MV** | 2027-05-08 → 2027-05-03 (-5d) | 2027-06-20 → 2027-06-15 (-5d) |  |
| 654 | **RHD4-02-002-L101-(MV)-Medium Voltage cable trench** | 2027-05-08 → 2027-05-03 (-5d) | 2027-06-10 → 2027-06-06 (-4d) |  |
| RHD4CZ1L101MV1100 | Excavation for Medium Voltage Trench - (RD-L-10/1)-Z1-L101-MV | 2027-05-08 → 2027-05-03 (-5d) | 2027-05-26 → 2027-05-22 (-4d) | -198d → -194d |
| RHD4CZ1L101MV1200 | Trench Backfilling for Medium Voltage Network - (RD-L-10/1)-Z1-L101-MV | 2027-05-27 → 2027-05-23 (-4d) | 2027-06-10 → 2027-06-06 (-4d) | -198d → -194d |
| 656 | **RHD4-02-002-L101-(MV)-Medium Voltage cables 3Cx 500 mm²** | 2027-05-27 → 2027-05-23 (-4d) | 2027-06-17 → 2027-06-13 (-4d) |  |
| RHD4CZ1L101MV3100 | Installation of Medium Voltage Cables 3Cx 500 mm² - (RD-L-10/1)-Z1-L101-MV | 2027-05-27 → 2027-05-23 (-4d) | 2027-06-02 → 2027-05-29 (-4d) | -193d → -189d |
| RHD4CZ1L101MV3200 | Joints Installation of Medium Voltage Cables 3Cx 500 mm² - (RD-L-10/1)-Z1-L101-MV | 2027-06-03 → 2027-05-30 (-4d) | 2027-06-05 → 2027-05-31 (-5d) | -193d → -189d |
| RHD4CZ1L101MV3300 | Testing of Medium Voltage Cables 3Cx 500 mm² - (RD-L-10/1)-Z1-L101-MV | 2027-06-12 → 2027-06-07 (-5d) | 2027-06-17 → 2027-06-13 (-4d) | -198d → -194d |
| 5387 | **RHD4-02-002-C062-(MV)-Medium Voltage cables 3Cx 50 mm²** | 2027-06-19 → 2027-06-14 (-5d) | 2027-06-20 → 2027-06-15 (-5d) |  |
| RHD4CZ1L101MV3401 | Termination of Medium Voltage Cables 3Cx 50 mm² - (RD-L-10/1)-Z1-L101-MV | 2027-06-19 → 2027-06-14 (-5d) | 2027-06-20 → 2027-06-15 (-5d) | -129d → -125d |
| 660 | **RHD4-02-002-Z1-L101-Low Voltage Network - LV** | 2027-08-26 → 2027-08-18 (-8d) | 2027-10-02 → 2027-09-22 (-10d) |  |
| 661 | **RHD4-02-002-L101-(LV)-Low Voltage duct banks** | 2027-08-26 → 2027-08-18 (-8d) | 2027-09-04 → 2027-08-26 (-9d) |  |
| RHD4CZ1L101LV2100 | Excavation of Duct Banks for Low Voltage Network - (RD-L-10/1)-Z1-L101-LV | 2027-08-26 → 2027-08-18 (-8d) | 2027-08-28 → 2027-08-19 (-9d) | -196d → -189d |
| RHD4CZ1L101LV2200 | Installation of Duct Banks for Low Voltage Network - (RD-L-10/1)-Z1-L101-LV | 2027-08-29 → 2027-08-21 (-8d) | 2027-08-30 → 2027-08-22 (-8d) | -196d → -189d |
| RHD4CZ1L101LV2300 | Pouring of Duct Banks for Low Voltage Network - (RD-L-10/1)-Z1-L101-LV | 2027-08-31 → 2027-08-23 (-8d) | 2027-09-01 → 2027-08-24 (-8d) | -196d → -189d |
| RHD4CZ1L101LV2400 | Backfilling of Duct Banks for Low Voltage Network - (RD-L-10/1)-Z1-L101-LV | 2027-09-02 → 2027-08-25 (-8d) | 2027-09-04 → 2027-08-26 (-9d) | -196d → -189d |
| 662 | **RHD4-02-002-L101-(LV)-Low Voltage Drawpit** | 2027-09-02 → 2027-08-25 (-8d) | 2027-09-06 → 2027-08-29 (-8d) |  |
| RHD4CZ1L101LV5100 | Excavation of Drawpit size 900x900x1000mm for Low Voltage Network - (RD-L-10/1)-Z1-L101-LV | 2027-09-02 → 2027-08-25 (-8d) | 2027-09-04 → 2027-08-26 (-9d) | -188d → -181d |
| RHD4CZ1L101LV5200 | Installation of Drawpit size 900x900x1000mm for Low Voltage Network - (RD-L-10/1)-Z1-L101-LV | 2027-09-05 → 2027-08-28 (-8d) | 2027-09-06 → 2027-08-29 (-8d) | -188d → -181d |
| 663 | **RHD4-02-002-L101-(LV)-Low Voltage cables** | 2027-09-05 → 2027-08-28 (-8d) | 2027-10-02 → 2027-09-22 (-10d) |  |
| RHD4CZ1L101LV3100 | Excavation for Low Voltage Cables for Low Voltage Network - (RD-L-10/1)-Z1-L101-LV | 2027-09-05 → 2027-08-28 (-8d) | 2027-09-12 → 2027-09-04 (-8d) | -190d → -183d |
| RHD4CZ1L101LV3200 | Cable Laying of Low Voltage Cables for Low Voltage Network - (RD-L-10/1)-Z1-L101-LV | 2027-09-13 → 2027-09-05 (-8d) | 2027-09-19 → 2027-09-11 (-8d) | -190d → -183d |
| RHD4CZ1L101LV3300 | Warning tape and Backfill for Low Voltage Cables for Low Voltage Network - (RD-L-10/1)-Z1-L101-LV | 2027-09-20 → 2027-09-12 (-8d) | 2027-09-27 → 2027-09-18 (-9d) | -190d → -183d |
| RHD4CZ1L101LV3400 | Testing of Low Voltage Cables for Low Voltage Network - (RD-L-10/1)-Z1-L101-LV | 2027-09-28 → 2027-09-19 (-9d) | 2027-10-02 → 2027-09-22 (-10d) | -190d → -183d |
| 666 | **RHD4-02-002-Z1-L101-Street Lighting Network - SL** | 2027-08-26 → 2027-08-18 (-8d) | 2027-10-30 → 2027-10-21 (-9d) |  |
| 667 | **RHD4-02-002-L101-(SL)-Street Lighting duct banks** | 2027-08-26 → 2027-08-18 (-8d) | 2027-09-06 → 2027-08-29 (-8d) |  |
| RHD4CZ1L101SL2100 | Excavation of Duct Banks for Street Lighting Network - (RD-L-10/1)-Z1-L101-SL | 2027-08-26 → 2027-08-18 (-8d) | 2027-08-28 → 2027-08-19 (-9d) | -194d → -187d |
| RHD4CZ1L101SL2200 | Installation of Duct Banks for Street Lighting Network - (RD-L-10/1)-Z1-L101-SL | 2027-08-31 → 2027-08-23 (-8d) | 2027-09-01 → 2027-08-24 (-8d) | -196d → -189d |
| RHD4CZ1L101SL2300 | Pouring of Duct Banks for Street Lighting Network - (RD-L-10/1)-Z1-L101-SL | 2027-09-02 → 2027-08-25 (-8d) | 2027-09-04 → 2027-08-26 (-9d) | -196d → -189d |
| RHD4CZ1L101SL2400 | Backfilling of Duct Banks for Street Lighting Network - (RD-L-10/1)-Z1-L101-SL | 2027-09-05 → 2027-08-28 (-8d) | 2027-09-06 → 2027-08-29 (-8d) | -196d → -189d |
| 668 | **RHD4-02-002-L101-(SL)-Street Lighting Drawpit** | 2027-09-07 → 2027-08-30 (-8d) | 2027-09-11 → 2027-09-02 (-9d) |  |
| RHD4CZ1L101SL5100 | Excavation of Drawpit size 600x600x900mm for Street Lighting Network - (RD-L-10/1)-Z1-L101-SL | 2027-09-07 → 2027-08-30 (-8d) | 2027-09-08 → 2027-08-31 (-8d) | -188d → -181d |
| RHD4CZ1L101SL5200 | Installation of Drawpit size 600x600x900mm for Street Lighting Network - (RD-L-10/1)-Z1-L101-SL | 2027-09-09 → 2027-09-01 (-8d) | 2027-09-11 → 2027-09-02 (-9d) | -188d → -181d |
| 669 | **RHD4-02-002-L101-(SL)-Street Lighting cables** | 2027-09-21 → 2027-09-13 (-8d) | 2027-10-18 → 2027-10-10 (-8d) |  |
| RHD4CZ1L101SL3100 | Excavation for Street Lighting Cables for Street Lighting Network - (RD-L-10/1)-Z1-L101-SL | 2027-09-21 → 2027-09-13 (-8d) | 2027-09-29 → 2027-09-20 (-9d) | -196d → -189d |
| RHD4CZ1L101SL3200 | Cable Laying of Street Lighting Cables for Street Lighting Network - (RD-L-10/1)-Z1-L101-SL | 2027-09-30 → 2027-09-21 (-9d) | 2027-10-06 → 2027-09-28 (-8d) | -196d → -189d |
| RHD4CZ1L101SL3300 | Warning tape and Backfill for Street Lighting Cables for Street Lighting Network - (RD-L-10/1)-Z1-L101-SL | 2027-10-07 → 2027-09-29 (-8d) | 2027-10-13 → 2027-10-05 (-8d) | -196d → -189d |
| RHD4CZ1L101SL3400 | Testing of Street Lighting Cables for Street Lighting Network - (RD-L-10/1)-Z1-L101-SL | 2027-10-14 → 2027-10-06 (-8d) | 2027-10-18 → 2027-10-10 (-8d) | -196d → -189d |
| 670 | **RHD4-02-002-L101-(SL)-Street Lighting Poles** | 2027-09-07 → 2027-08-30 (-8d) | 2027-10-30 → 2027-10-21 (-9d) |  |
| RHD4CZ1L101SL1100 | Excavation for RC Base for Lighting Poles for Street Lighting Network - (RD-L-10/1)-Z1-L101-SL | 2027-09-07 → 2027-08-30 (-8d) | 2027-09-11 → 2027-09-02 (-9d) | -196d → -189d |
| RHD4CZ1L101SL1200 | Installation for RC Base for Lighting Poles for Street Lighting Network - (RD-L-10/1)-Z1-L101-SL | 2027-09-12 → 2027-09-04 (-8d) | 2027-09-15 → 2027-09-07 (-8d) | -196d → -189d |
| RHD4CZ1L101SL1300 | Backfill for RC Base for Lighting Poles for Street Lighting Network - (RD-L-10/1)-Z1-L101-SL | 2027-09-16 → 2027-09-08 (-8d) | 2027-09-20 → 2027-09-12 (-8d) | -196d → -189d |
| RHD4CZ1L101SL1400 | Installation for Lighting Poles for Street Lighting Network - (RD-L-10/1)-Z1-L101-SL | 2027-10-19 → 2027-10-11 (-8d) | 2027-10-25 → 2027-10-17 (-8d) | -196d → -189d |
| RHD4CZ1L101SL1500 | Luminaire Installation for Lighting Poles for Street Lighting Network - (RD-L-10/1)-Z1-L101-SL | 2027-10-26 → 2027-10-18 (-8d) | 2027-10-30 → 2027-10-21 (-9d) | -194d → -187d |
| 672 | **RHD4-02-002-L101-(SL)-Street Lighting Earthing System** | 2027-10-26 → 2027-10-18 (-8d) | 2027-10-27 → 2027-10-19 (-8d) |  |
| RHD4CZ1L101SL6100 | Installation of Earthing for Lighting Poles and Fedder Pillers for Street Lighting Network - (RD-L-10/1)-Z1-L101-SL | 2027-10-26 → 2027-10-18 (-8d) | 2027-10-27 → 2027-10-19 (-8d) | -196d → -189d |
| 678 | **RHD4-02-002-Z1-L101-Telecommunications Network - TC** | 2027-10-28 → 2027-10-20 (-8d) | 2027-12-12 → 2027-12-04 (-8d) |  |
| 679 | **RHD4-02-002-L101-(TC)-Telecommunications Ducts** | 2027-10-28 → 2027-10-20 (-8d) | 2027-12-12 → 2027-12-04 (-8d) |  |
| RHD4CZ1L101TC2100 | Excavation of HDPE Ducts for Telecom Network - (RD-L-10/1)-Z1-L101-TC | 2027-10-28 → 2027-10-20 (-8d) | 2027-11-09 → 2027-11-01 (-8d) | -196d → -189d |
| RHD4CZ1L101TC2200 | Installation of HDPE Ducts for Telecom Network - (RD-L-10/1)-Z1-L101-TC | 2027-11-10 → 2027-11-02 (-8d) | 2027-11-29 → 2027-11-21 (-8d) | -196d → -189d |
| RHD4CZ1L101TC2400 | Backfilling of HDPE Ducts for Telecom Network - (RD-L-10/1)-Z1-L101-TC | 2027-11-30 → 2027-11-22 (-8d) | 2027-12-12 → 2027-12-04 (-8d) | -196d → -189d |
| 680 | **RHD4-02-002-L101-(TC)-Telecommunications Manholes** | 2027-11-10 → 2027-11-02 (-8d) | 2027-11-21 → 2027-11-13 (-8d) |  |
| RHD4CZ1L101TC5100 | Excavation for Manholes for Telecom Network - (RD-L-10/1)-Z1-L101-TC | 2027-11-10 → 2027-11-02 (-8d) | 2027-11-15 → 2027-11-07 (-8d) | -189d → -182d |

| ID | Task | Start | Finish | Total float |
| --- | --- | --- | --- | --- |
| RHD4CZ1L101TC5200 | Installation of Manholes for Telecom Network - (RD-L-10/1)-Z1-L101-TC | 2027-11-16 → 2027-11-08 (-8d) | 2027-11-21 → 2027-11-13 (-8d) | -189d → -182d |
| 682 | **RHD4-02-002-Z1-L101-Information and Communication Technologies - ICT** | 2027-03-17 → 2027-03-21 (+4d) | 2027-12-01 → 2027-11-23 (-8d) |  |
| 683 | **RHD4-02-002-L101-(ICT)-Information and Communication Technologies Ducts** | 2027-10-19 → 2027-10-11 (-8d) | 2027-12-01 → 2027-11-23 (-8d) |  |
| RHD4CZ1L101ICT2100 | Excavation of HDPE Ducts for ICT Network - (RD-L-10/1)-Z1-L101-ICT | 2027-10-19 → 2027-10-11 (-8d) | 2027-10-31 → 2027-10-23 (-8d) | -195d → -188d |
| RHD4CZ1L101ICT2200 | Installation of HDPE Ducts for ICT Network - (RD-L-10/1)-Z1-L101-ICT | 2027-11-01 → 2027-10-24 (-8d) | 2027-11-18 → 2027-11-10 (-8d) | -187d → -180d |
| RHD4CZ1L101ICT2400 | Backfilling of HDPE Ducts for ICT Network - (RD-L-10/1)-Z1-L101-ICT | 2027-11-20 → 2027-11-11 (-9d) | 2027-12-01 → 2027-11-23 (-8d) | -187d → -180d |
| 684 | **RHD4-02-002-L101-(ICT)-Information and Communication Technologies Manholes** | 2027-11-01 → 2027-10-24 (-8d) | 2027-11-11 → 2027-11-03 (-8d) |  |
| RHD4CZ1L101ICT5100 | Excavation for Manholes for ICT Network - (RD-L-10/1)-Z1-L101-ICT | 2027-11-01 → 2027-10-24 (-8d) | 2027-11-06 → 2027-10-28 (-9d) | -195d → -188d |
| RHD4CZ1L101ICT5200 | Installation of Manholes for ICT Network - (RD-L-10/1)-Z1-L101-ICT | 2027-11-07 → 2027-10-30 (-8d) | 2027-11-11 → 2027-11-03 (-8d) | -195d → -188d |
| 685 | **RHD4-02-002-L101-(ICT)-Information and Communication Technologies Road Crossings** | 2027-03-17 → 2027-03-21 (+4d) | 2027-03-25 → 2027-03-29 (+4d) |  |
| RHD4CZ1L101ICT3100 | Excavation for Road Crossings for ICT Network - (RD-L-10/1)-Z1-L101-ICT | 2027-03-17 → 2027-03-21 (+4d) | 2027-03-18 → 2027-03-22 (+4d) | -185d → -188d |
| RHD4CZ1L101ICT3200 | Installation of Road Crossings for ICT Network - (RD-L-10/1)-Z1-L101-ICT | 2027-03-20 → 2027-03-23 (+3d) | 2027-03-21 → 2027-03-24 (+3d) | -185d → -188d |
| RHD4CZ1L101ICT3300 | Pouring of Road Crossings for ICT Network - (RD-L-10/1)-Z1-L101-ICT | 2027-03-22 → 2027-03-25 (+3d) | 2027-03-23 → 2027-03-27 (+4d) | -185d → -188d |
| RHD4CZ1L101ICT3400 | Backfilling of Road Crossings for ICT Network - (RD-L-10/1)-Z1-L101-ICT | 2027-03-24 → 2027-03-28 (+4d) | 2027-03-25 → 2027-03-29 (+4d) | -185d → -188d |
| 686 | **RHD4-02-002-Z1-L101-Security Network - CCTV** | 2027-12-13 → 2027-12-05 (-8d) | 2028-01-26 → 2028-01-18 (-8d) |  |
| 687 | **RHD4-02-002-L101-(CCTV)-Civil Works** | 2027-12-13 → 2027-12-05 (-8d) | 2027-12-23 → 2027-12-15 (-8d) |  |
| RHD4CZ1L101CCTV2100 | Civil Works for Security Network - (RD-L-10/1)-Z1-L101-CCTV | 2027-12-13 → 2027-12-05 (-8d) | 2027-12-23 → 2027-12-15 (-8d) | -196d → -189d |
| 688 | **RHD4-02-002-L101-(CCTV)-CCTV Poles** | 2027-12-25 → 2027-12-16 (-9d) | 2028-01-04 → 2027-12-27 (-8d) |  |
| RHD4CZ1L101CCTV1100 | Excavation for RC Base for CCTV Poles for Security Network - (RD-L-10/1)-Z1-L101-CCTV | 2027-12-25 → 2027-12-16 (-9d) | 2027-12-26 → 2027-12-18 (-8d) | -196d → -189d |
| RHD4CZ1L101CCTV1200 | Installation for RC Base for CCTV Poles for Security Network - (RD-L-10/1)-Z1-L101-CCTV | 2027-12-27 → 2027-12-19 (-8d) | 2027-12-28 → 2027-12-20 (-8d) | -196d → -189d |
| RHD4CZ1L101CCTV1300 | Backfill for RC Base for CCTV Poles for Security Network - (RD-L-10/1)-Z1-L101-CCTV | 2027-12-29 → 2027-12-21 (-8d) | 2027-12-30 → 2027-12-22 (-8d) | -196d → -189d |
| RHD4CZ1L101CCTV1400 | Installation for CCTV Poles for Security Network - (RD-L-10/1)-Z1-L101-CCTV | 2028-01-01 → 2027-12-23 (-9d) | 2028-01-02 → 2027-12-25 (-8d) | -196d → -189d |
| RHD4CZ1L101CCTV1500 | Protection post Installation for CCTV Poles for Security Network - (RD-L-10/1)-Z1-L101-CCTV | 2028-01-03 → 2027-12-26 (-8d) | 2028-01-04 → 2027-12-27 (-8d) | -194d → -187d |
| 689 | **RHD4-02-002-L101-(CCTV)-Camera** | 2028-01-08 → 2027-12-30 (-9d) | 2028-01-09 → 2028-01-01 (-8d) |  |
| RHD4CZ1L101CCTV3100 | Installation for Cameras for Security Network - (RD-L-10/1)-Z1-L101-CCTV | 2028-01-08 → 2027-12-30 (-9d) | 2028-01-09 → 2028-01-01 (-8d) | -193d → -186d |
| 690 | **RHD4-02-002-L101-(CCTV)-Power and Infrastructure** | 2028-01-03 → 2027-12-26 (-8d) | 2028-01-06 → 2027-12-29 (-8d) |  |
| RHD4CZ1L101CCTV4100 | Installation of Power outlet, UPS and midspan for PTZ Camerafor Cameras for Security Network - (RD-L-10/1)-Z1-L101-CCTV | 2028-01-03 → 2027-12-26 (-8d) | 2028-01-04 → 2027-12-27 (-8d) | -196d → -189d |
| RHD4CZ1L101CCTV4200 | Short Range Wireless PoP wireless Bridgefor CCTV Poles for Security Network - (RD-L-10/1)-Z1-L101-CCTV | 2028-01-05 → 2027-12-28 (-8d) | 2028-01-06 → 2027-12-29 (-8d) | -196d → -189d |
| 692 | **RHD4-02-002-L101-(CCTV)-CCTV Panels and Components** | 2028-01-10 → 2028-01-02 (-8d) | 2028-01-26 → 2028-01-18 (-8d) |  |
| RHD4CZ1L101CCTV6100 | Installation for CCTV Panels for Security Network - (RD-L-10/1)-Z1-L101-CCTV | 2028-01-10 → 2028-01-02 (-8d) | 2028-01-26 → 2028-01-18 (-8d) | -193d → -186d |
| 325 | **RHD4-02-002-Z1-C081** |  | 2028-03-28 → 2028-03-20 (-8d) |  |
| 504 | **RHD4-02-002-Z1-C081-Road Works - RD** | 2027-02-17 → 2027-02-18 (+1d) | 2028-03-28 → 2028-03-20 (-8d) |  |
| 505 | **RHD4-02-002-C081-(RD)-Subgrade** | 2027-02-17 → 2027-02-18 (+1d) | 2027-02-28 → 2027-03-01 (+1d) |  |
| RHD4CZ1C081RD1100 | Supply, lay and compaction subgrade compacted thickness 300 mm for Roads - (RD-C-8 /1)-Z1-C081-RD | 2027-02-17 → 2027-02-18 (+1d) | 2027-02-28 → 2027-03-01 (+1d) | -151d → -152d |
| 506 | **RHD4-02-002-C081-(RD)-Aggregate Base Course** | 2027-03-01 → 2027-03-02 (+1d) | 2027-03-08 → 2027-03-13 (+5d) |  |
| RHD4CZ1C081RD2100 | Supply, lay and compaction Aggregate base course compacted thickness 300 mmfor Roads - (RD-C-8 /1)-Z1-C081-RD | 2027-03-01 → 2027-03-02 (+1d) | 2027-03-08 → 2027-03-13 (+5d) | -151d → -152d |
| 507 | **RHD4-02-002-C081-(RD)-Bituminous base course Two Layers, including (MC1)&(RC2)** | 2027-03-13 → 2027-03-14 (+1d) | 2027-11-17 → 2027-11-18 (+1d) |  |
| RHD4CZ1C081RD3100 | Supply, lay and Asphaltic base course including Prime Coat (MC1) for 1st Layer - (RD-C-8 /1)-Z1-C081-RD | 2027-03-13 → 2027-03-14 (+1d) | 2027-03-15 → 2027-03-16 (+1d) | -151d → -152d |
| RHD4CZ1C081RD3200 | Supply, lay and Asphaltic base course including Tack Coat (RC2) for 2nd Layer - (RD-C-8 /1)-Z1-C081-RD | 2027-11-15 → 2027-11-16 (+1d) | 2027-11-17 → 2027-11-18 (+1d) | -100d → -101d |
| 509 | **RHD4-02-002-C081-(RD)-Precast Concrete Curb** | 2027-11-18 → 2027-11-20 (+2d) | 2027-11-28 → 2027-11-29 (+1d) |  |
| RHD4CZ1C081RD5100 | Supply and installation Precast Concrete Kerb for Roads - (RD-C-8 /1)-Z1-C081-RD | 2027-11-18 → 2027-11-20 (+2d) | 2027-11-28 → 2027-11-29 (+1d) | -100d → -101d |
| 512 | **RHD4-02-002-C081-(RD)-Traffic Signage** | 2028-02-14 → 2028-02-06 (-8d) | 2028-02-21 → 2028-02-13 (-8d) |  |
| RHD4CZ1C081RD8100 | Installation of Traffic Signage for Road Network - (RD-C-8 /1)-Z1-C081-RD | 2028-02-14 → 2028-02-06 (-8d) | 2028-02-21 → 2028-02-13 (-8d) | -166d → -159d |
| 508 | **RHD4-02-002-C081-(RD)-Bituminous concrete wearing course including tack coat (RC2)** | 2028-03-09 → 2028-03-01 (-8d) | 2028-03-11 → 2028-03-02 (-9d) |  |
| RHD4CZ1C081RD4100 | Supply, lay and compaction Asphaltic wearing course including tack Coat (RC2)for Road Network - (RD-C-8 /1)-Z1-C081-RD | 2028-03-09 → 2028-03-01 (-8d) | 2028-03-11 → 2028-03-02 (-9d) | -175d → -168d |
| 511 | **RHD4-02-002-C081-(RD)-Pavement Marking** | 2028-03-18 → 2028-03-09 (-9d) | 2028-03-28 → 2028-03-20 (-8d) |  |
| RHD4CZ1C081RD7100 | Pavement Markings for Road Network - (RD-C-8 /1)-Z1-C081-RD | 2028-03-18 → 2028-03-09 (-9d) | 2028-03-28 → 2028-03-20 (-8d) | -180d → -173d |
| 329 | **RHD4-02-002-Z1-C081-Storm Network - ST** |  | 2027-03-27 → 2027-03-28 (+1d) |  |
| 5253 | **RHD4-02-002-C081-(ST)-GRP Pipes - 800 mm diameter** |  | 2027-01-30 → 2027-01-31 (+1d) |  |
| RHD4CZ1C081ST1404 | Primary Test for GRP Pipe Line 800 mm - (RD-C-8 /1)-Z1-C081-ST | 2027-01-26 → 2027-01-27 (+1d) | 2027-01-27 → 2027-01-28 (+1d) | -164d → -165d |
| RHD4CZ1C081ST1504 | Backfilling and warning tape works for GRP Pipe Line 800 mm - (RD-C-8 /1)-Z1-C081-ST | 2027-01-28 → 2027-01-30 (+2d) | 2027-01-30 → 2027-01-31 (+1d) | -164d → -165d |
| 346 | **RHD4-02-002-C081-(ST)-MH Works - 1200 mm diameter** |  | 2027-02-17 → 2027-02-18 (+1d) |  |
| RHD4CZ1C081ST3200 | Installation of Base for MH 1200 mm - (RD-C-8 /1)-Z1-C081-ST | 2027-01-26 → 2027-01-27 (+1d) | 2027-01-31 → 2027-02-01 (+1d) | -150d → -151d |
| RHD4CZ1C081ST3300 | MH Ring and C.Slab works and Backfilling works for MH 1200 mm - (RD-C-8 /1)-Z1-C081-ST | 2027-02-01 → 2027-02-02 (+1d) | 2027-02-06 → 2027-02-07 (+1d) | -150d → -151d |
| RHD4CZ1C081ST3400 | Steel Cover for MH 1200 mm - (RD-C-8 /1)-Z1-C081-ST | 2027-02-07 → 2027-02-08 (+1d) | 2027-02-11 → 2027-02-13 (+2d) | -150d → -151d |
| RHD4CZ1C081ST3500 | Finishing, Benching, Testing works for MH 1200 mm - (RD-C-8 /1)-Z1-C081-ST | 2027-02-13 → 2027-02-14 (+1d) | 2027-02-17 → 2027-02-18 (+1d) | -150d → -151d |
| 347 | **RHD4-02-002-C081-(ST)-MH Works - 1500 mm diameter** |  | 2027-03-27 → 2027-03-28 (+1d) |  |
| RHD4CZ1C081ST3101 | Excavation and PC Blinding works for MH 1500 mm - (RD-C-8 /1)-Z1-C081-ST |  | 2027-01-30 → 2027-01-31 (+1d) | -145d → -146d |
| RHD4CZ1C081ST3201 | Installation of Base for MH 1500 mm - (RD-C-8 /1)-Z1-C081-ST | 2027-02-01 → 2027-02-02 (+1d) | 2027-02-04 → 2027-02-06 (+2d) | -146d → -147d |
| RHD4CZ1C081ST3301 | MH Ring and C.Slab works and Backfilling works for MH 1500 mm - (RD-C-8 /1)-Z1-C081-ST | 2027-02-07 → 2027-02-08 (+1d) | 2027-02-10 → 2027-02-11 (+1d) | -147d → -148d |
| RHD4CZ1C081ST3401 | Steel Cover for MH 1500 mm - (RD-C-8 /1)-Z1-C081-ST | 2027-02-13 → 2027-02-14 (+1d) | 2027-02-14 → 2027-02-15 (+1d) | -148d → -149d |
| RHD4CZ1C081ST3501 | Finishing, Benching, Testing works for MH 1500 mm - (RD-C-8 /1)-Z1-C081-ST | 2027-03-23 → 2027-03-24 (+1d) | 2027-03-27 → 2027-03-28 (+1d) | -108d → -109d |
| 335 | **RHD4-02-002-C081-(ST)-GRP Pipes - 900 mm diameter** |  | 2027-02-11 → 2027-02-13 (+2d) |  |
| RHD4CZ1C081ST1105 | Excavation works for GRP Pipe Line 900 mm - (RD-C-8 /1)-Z1-C081-ST |  | 2027-02-02 → 2027-02-03 (+1d) | -149d → -150d |
| RHD4CZ1C081ST1205 | Bedding works for GRP Pipe Line 900 mm - (RD-C-8 /1)-Z1-C081-ST |  | 2027-02-04 → 2027-02-06 (+2d) | -149d → -150d |
| RHD4CZ1C081ST1305 | Installing for GRP Pipe Line 900 mm - (RD-C-8 /1)-Z1-C081-ST |  | 2027-02-07 → 2027-02-08 (+1d) | -149d → -150d |
| RHD4CZ1C081ST1405 | Primary Test for GRP Pipe Line 900 mm - (RD-C-8 /1)-Z1-C081-ST | 2027-02-08 → 2027-02-09 (+1d) | 2027-02-09 → 2027-02-10 (+1d) | -149d → -150d |
| RHD4CZ1C081ST1505 | Backfilling and warning tape works for GRP Pipe Line 900 mm - (RD-C-8 /1)-Z1-C081-ST | 2027-02-10 → 2027-02-11 (+1d) | 2027-02-11 → 2027-02-13 (+2d) | -147d → -148d |
| 333 | **RHD4-02-002-C081-(ST)-GRP Pipes - 700 mm diameter** |  | 2027-02-14 → 2027-02-15 (+1d) |  |
| RHD4CZ1C081ST1103 | Excavation works for GRP Pipe Line 700 mm - (RD-C-8 /1)-Z1-C081-ST |  | 2027-02-04 → 2027-02-06 (+2d) | -149d → -150d |

| ID | Task | Start | Finish | Complete | Total float |
| --- | --- | --- | --- | --- | --- |
| RHD4CZ1C081ST1203 | Bedding works for GRP Pipe Line 700 mm - (RD-C-8 /1)-Z1-C081-ST | 2027-02-06 → 2027-02-07 (+1d) | 2027-02-07 → 2027-02-08 (+1d) |  | -149d → -150d |
| RHD4CZ1C081ST1303 | Installing for GRP Pipe Line 700 mm - (RD-C-8 /1)-Z1-C081-ST | 2027-02-08 → 2027-02-09 (+1d) | 2027-02-09 → 2027-02-10 (+1d) |  | -149d → -150d |
| RHD4CZ1C081ST1403 | Primary Test for GRP Pipe Line 700 mm - (RD-C-8 /1)-Z1-C081-ST | 2027-02-10 → 2027-02-11 (+1d) | 2027-02-11 → 2027-02-13 (+2d) |  | -149d → -150d |
| RHD4CZ1C081ST1503 | Backfilling and warning tape works for GRP Pipe Line 700 mm - (RD-C-8 /1)-Z1-C081-ST | 2027-02-13 → 2027-02-14 (+1d) | 2027-02-14 → 2027-02-15 (+1d) |  | -147d → -148d |
| 332 | **RHD4-02-002-C081-(ST)-GRP Pipes - 600 mm diameter** |  | 2027-02-16 → 2027-02-17 (+1d) |  |  |
| RHD4CZ1C081ST1102 | Excavation works for GRP Pipe Line 600 mm - (RD-C-8 /1)-Z1-C081-ST |  | 2027-02-07 → 2027-02-08 (+1d) |  | -149d → -150d |
| RHD4CZ1C081ST1202 | Bedding works for GRP Pipe Line 600 mm - (RD-C-8 /1)-Z1-C081-ST |  | 2027-02-09 → 2027-02-10 (+1d) |  | -149d → -150d |
| RHD4CZ1C081ST1302 | Installing for GRP Pipe Line 600 mm - (RD-C-8 /1)-Z1-C081-ST |  | 2027-02-11 → 2027-02-13 (+2d) |  | -149d → -150d |
| RHD4CZ1C081ST1402 | Primary Test for GRP Pipe Line 600 mm - (RD-C-8 /1)-Z1-C081-ST | 2027-02-13 → 2027-02-14 (+1d) | 2027-02-14 → 2027-02-15 (+1d) |  | -149d → -150d |
| RHD4CZ1C081ST1502 | Backfilling and warning tape works for GRP Pipe Line 600 mm - (RD-C-8 /1)-Z1-C081-ST | 2027-02-15 → 2027-02-16 (+1d) | 2027-02-16 → 2027-02-17 (+1d) |  | -147d → -148d |
| 331 | **RHD4-02-002-C081-(ST)-GRP Pipes - 500 mm diameter** |  | 2027-02-18 → 2027-02-20 (+2d) |  |  |
| RHD4CZ1C081ST1101 | Excavation works for GRP Pipe Line 500 mm - (RD-C-8 /1)-Z1-C081-ST |  | 2027-02-09 → 2027-02-10 (+1d) |  | -149d → -150d |
| RHD4CZ1C081ST1201 | Bedding works for GRP Pipe Line 500 mm - (RD-C-8 /1)-Z1-C081-ST |  | 2027-02-11 → 2027-02-13 (+2d) |  | -149d → -150d |
| RHD4CZ1C081ST1301 | Installing for GRP Pipe Line 500 mm - (RD-C-8 /1)-Z1-C081-ST |  | 2027-02-14 → 2027-02-15 (+1d) |  | -149d → -150d |
| RHD4CZ1C081ST1401 | Primary Test for GRP Pipe Line 500 mm - (RD-C-8 /1)-Z1-C081-ST | 2027-02-15 → 2027-02-16 (+1d) | 2027-02-16 → 2027-02-17 (+1d) |  | -149d → -150d |
| RHD4CZ1C081ST1501 | Backfilling and warning tape works for GRP Pipe Line 500 mm - (RD-C-8 /1)-Z1-C081-ST | 2027-02-17 → 2027-02-18 (+1d) | 2027-02-18 → 2027-02-20 (+2d) |  | -147d → -148d |
| 330 | **RHD4-02-002-C081-(ST)-GRP Pipes - 400 mm diameter** |  | 2027-02-27 → 2027-02-28 (+1d) |  |  |
| RHD4CZ1C081ST1100 | Excavation works for GRP Pipe Line 400 mm - (RD-C-8 /1)-Z1-C081-ST |  | 2027-02-09 → 2027-02-10 (+1d) |  | -147d → -148d |
| RHD4CZ1C081ST1200 | Bedding works for GRP Pipe Line 400 mm - (RD-C-8 /1)-Z1-C081-ST |  | 2027-02-14 → 2027-02-15 (+1d) |  | -149d → -150d |
| RHD4CZ1C081ST1300 | Installing for GRP Pipe Line 400 mm - (RD-C-8 /1)-Z1-C081-ST |  | 2027-02-16 → 2027-02-17 (+1d) |  | -149d → -150d |
| RHD4CZ1C081ST1400 | Primary Test for GRP Pipe Line 400 mm - (RD-C-8 /1)-Z1-C081-ST | 2027-02-17 → 2027-02-18 (+1d) | 2027-02-21 → 2027-02-23 (+2d) |  | -149d → -150d |
| RHD4CZ1C081ST1500 | Backfilling and warning tape works for GRP Pipe Line 400 mm - (RD-C-8 /1)-Z1-C081-ST | 2027-02-23 → 2027-02-24 (+1d) | 2027-02-27 → 2027-02-28 (+1d) |  | -149d → -150d |
| 344 | **RHD4-02-002-C081-(ST)-UPVC Pipes - 300 mm diameter** |  | 2027-03-22 → 2027-03-23 (+1d) |  |  |
| RHD4CZ1C081ST2100 | Excavation works for UPVC Pipe Line 300 mm - (RD-C-8 /1)-Z1-C081-ST |  | 2027-03-03 → 2027-03-04 (+1d) |  | -149d → -150d |
| RHD4CZ1C081ST2300 | Installing for UPVC Pipe Line 300 mm - (RD-C-8 /1)-Z1-C081-ST | 2027-03-08 → 2026-11-07 A (-121d) | 2027-03-15 → 2027-03-16 (+1d) | 0% → 5% | -149d → -150d |
| RHD4CZ1C081ST2200 | Bedding works for UPVC Pipe Line 300 mm - (RD-C-8 /1)-Z1-C081-ST | 2027-03-04 → 2026-11-12 A (-112d) | 2027-03-07 → 2027-03-08 (+1d) | 0% → 9% | -149d → -150d |
| RHD4CZ1C081ST2400 | Primary Test for UPVC Pipe Line 300 mm - (RD-C-8 /1)-Z1-C081-ST | 2027-03-16 → 2027-03-17 (+1d) | 2027-03-17 → 2027-03-18 (+1d) |  | -146d → -147d |
| RHD4CZ1C081ST2500 | Backfilling and warning tape works for UPVC Pipe Line 300 mm - (RD-C-8 /1)-Z1-C081-ST | 2027-03-18 → 2027-03-20 (+2d) | 2027-03-22 → 2027-03-23 (+1d) |  | -146d → -147d |
| 352 | **RHD4-02-002-C081-(ST)-Concrete Encasement** | 2027-03-16 → 2027-03-17 (+1d) | 2027-03-17 → 2027-03-18 (+1d) |  |  |
| RHD4CZ1C081ST6100 | Pipe Encasement for Storm Pipelines - (RD-C-8 /1)-Z1-C081-ST | 2027-03-16 → 2027-03-17 (+1d) | 2027-03-17 → 2027-03-18 (+1d) |  | -151d → -152d |
| 353 | **RHD4-02-002-Z1-C081-Catch Basin - ST** | 2027-01-31 → 2027-02-01 (+1d) | 2027-03-03 → 2027-03-04 (+1d) |  |  |
| 354 | **RHD4-02-002-C081-(ST)-Single Catch Basin Works** | 2027-01-31 → 2027-02-01 (+1d) | 2027-03-01 → 2027-03-02 (+1d) |  |  |
| RHD4CZ1C081ST7100 | Excavation works for Single Catch Basin - (RD-C-8 /1)-Z1-C081-ST | 2027-01-31 → 2027-02-01 (+1d) | 2027-02-03 → 2027-02-04 (+1d) |  | -164d → -165d |
| RHD4CZ1C081ST7200 | PC Blinding, Installation and Pipe connection for Single Catch Basin - (RD-C-8 /1)-Z1-C081-ST | 2027-02-04 → 2027-02-06 (+2d) | 2027-02-08 → 2027-02-09 (+1d) |  | -164d → -165d |
| RHD4CZ1C081ST7300 | Rings & C.Slab & Final Backfill for Single Catch Basin - (RD-C-8 /1)-Z1-C081-ST | 2027-02-09 → 2027-02-10 (+1d) | 2027-02-14 → 2027-02-15 (+1d) |  | -164d → -165d |
| RHD4CZ1C081ST7400 | Steel Cover for Single Catch Basin - (RD-C-8 /1)-Z1-C081-ST | 2027-02-15 → 2027-02-16 (+1d) | 2027-02-18 → 2027-02-20 (+2d) |  | -164d → -165d |
| RHD4CZ1C081ST7500 | Finishing and Insulation works for Single Catch Basin - (RD-C-8 /1)-Z1-C081-ST | 2027-02-20 → 2027-02-21 (+1d) | 2027-03-01 → 2027-03-02 (+1d) |  | -164d → -165d |
| 355 | **RHD4-02-002-C081-(ST)-Double Catch Basin Works** | 2027-01-31 → 2027-02-01 (+1d) | 2027-03-03 → 2027-03-04 (+1d) |  |  |
| RHD4CZ1C081ST8100 | Excavation works for Double Catch Basin - (RD-C-8 /1)-Z1-C081-ST | 2027-01-31 → 2027-02-01 (+1d) | 2027-02-01 → 2027-02-02 (+1d) |  | -147d → -148d |
| RHD4CZ1C081ST8200 | PC Blinding, Installation and Pipe connection for Double Catch Basin - (RD-C-8 /1)-Z1-C081-ST | 2027-02-09 → 2027-02-10 (+1d) | 2027-02-10 → 2027-02-11 (+1d) |  | -153d → -154d |
| RHD4CZ1C081ST8300 | Rings & C.Slab & Final Backfillfor Double Catch Basin - (RD-C-8 /1)-Z1-C081-ST | 2027-02-15 → 2027-02-16 (+1d) | 2027-02-16 → 2027-02-17 (+1d) |  | -156d → -157d |
| RHD4CZ1C081ST8400 | Steel Cover for Double Catch Basin - (RD-C-8 /1)-Z1-C081-ST | 2027-02-20 → 2027-02-21 (+1d) | 2027-02-21 → 2027-02-23 (+2d) |  | -158d → -159d |
| RHD4CZ1C081ST8500 | Finishing and Insulation works for Double Catch Basin - (RD-C-8 /1)-Z1-C081-ST | 2027-03-02 → 2027-03-03 (+1d) | 2027-03-03 → 2027-03-04 (+1d) |  | -164d → -165d |
| 378 | **RHD4-02-002-Z1-C081-Sewage Network - SW** | 2027-03-18 → 2027-03-20 (+2d) | 2027-04-15 → 2027-04-17 (+2d) |  |  |
| 388 | **RHD4-02-002-C081-(SW)-MH Works - 1200 mm diameter** | 2027-03-18 → 2027-03-20 (+2d) | 2027-04-11 → 2027-04-12 (+1d) |  |  |
| RHD4CZ1C081SW3100 | Excavation and PC Blinding works for MH 1200 mm - (RD-C-8 /1)-Z1-C081-SW | 2027-03-18 → 2027-03-20 (+2d) | 2027-03-22 → 2027-03-23 (+1d) |  | -151d → -152d |
| RHD4CZ1C081SW3200 | Installation of Base for MH 1200 mm - (RD-C-8 /1)-Z1-C081-SW | 2027-03-23 → 2027-03-24 (+1d) | 2027-03-28 → 2027-03-29 (+1d) |  | -151d → -152d |
| RHD4CZ1C081SW3300 | MH Ring and C.Slab works and Backfilling works for MH 1200 mm - (RD-C-8 /1)-Z1-C081-SW | 2027-03-29 → 2027-03-30 (+1d) | 2027-04-03 → 2027-04-04 (+1d) |  | -151d → -152d |
| RHD4CZ1C081SW3400 | Steel Cover for MH 1200 mm - (RD-C-8 /1)-Z1-C081-SW | 2027-04-04 → 2027-04-05 (+1d) | 2027-04-05 → 2027-04-06 (+1d) |  | -114d → -115d |
| RHD4CZ1C081SW3500 | Finishing, Benching, Testing works for MH 1200 mm - (RD-C-8 /1)-Z1-C081-SW | 2027-04-06 → 2027-04-07 (+1d) | 2027-04-11 → 2027-04-12 (+1d) |  | -114d → -115d |
| 384 | **RHD4-02-002-C081-(SW)-UPVC Pipes - 200 mm diameter** | 2027-03-23 → 2027-03-24 (+1d) | 2027-04-15 → 2027-04-17 (+2d) |  |  |
| RHD4CZ1C081SW2100 | Excavation works for UPVC Pipe Line 200 mm - (RD-C-8 /1)-Z1-C081-SW | 2027-03-23 → 2027-03-24 (+1d) | 2027-03-27 → 2027-03-28 (+1d) |  | -149d → -150d |
| RHD4CZ1C081SW2200 | Bedding works for UPVC Pipe Line 200 mm - (RD-C-8 /1)-Z1-C081-SW | 2027-03-28 → 2027-03-29 (+1d) | 2027-03-31 → 2027-04-01 (+1d) |  | -149d → -150d |
| RHD4CZ1C081SW2300 | Installing for UPVC Pipe Line 200 mm - (RD-C-8 /1)-Z1-C081-SW | 2027-04-04 → 2027-04-05 (+1d) | 2027-04-07 → 2027-04-08 (+1d) |  | -151d → -152d |
| RHD4CZ1C081SW2400 | Primary Test for UPVC Pipe Line 200 mm - (RD-C-8 /1)-Z1-C081-SW | 2027-04-08 → 2027-04-10 (+2d) | 2027-04-11 → 2027-04-12 (+1d) |  | -151d → -152d |
| RHD4CZ1C081SW2500 | Backfilling and warning tape works for UPVC Pipe Line 200 mm - (RD-C-8 /1)-Z1-C081-SW | 2027-04-12 → 2027-04-13 (+1d) | 2027-04-15 → 2027-04-17 (+2d) |  | -151d → -152d |
| 415 | **RHD4-02-002-Z1-C081-Potable Network - PT** | 2027-04-17 → 2027-04-18 (+1d) | 2027-09-13 → 2027-09-09 (-4d) |  |  |
| 418 | **RHD4-02-002-C081-(PT)-HDPE Pipes - 200 mm diameter** | 2027-04-17 → 2027-04-18 (+1d) | 2027-05-25 → 2027-05-26 (+1d) |  |  |
| RHD4CZ1C081PT1102 | Excavation works for HDPE Pipline 200 mm - (RD-C-8 /1)-Z1-C081-PT | 2027-04-17 → 2027-04-18 (+1d) | 2027-04-22 → 2027-04-24 (+2d) |  | -151d → -152d |
| RHD4CZ1C081PT1202 | Bedding works for HDPE Pipline 200 mm - (RD-C-8 /1)-Z1-C081-PT | 2027-04-24 → 2027-04-25 (+1d) | 2027-04-28 → 2027-04-29 (+1d) |  | -141d → -142d |
| RHD4CZ1C081PT1302 | Installing for HDPE Pipline 200 mm - (RD-C-8 /1)-Z1-C081-PT | 2027-04-29 → 2027-05-01 (+2d) | 2027-05-09 → 2027-05-10 (+1d) |  | -141d → -142d |
| RHD4CZ1C081PT1402 | Primary Test for HDPE Pipline 200 mm - (RD-C-8 /1)-Z1-C081-PT | 2027-05-10 → 2027-05-11 (+1d) | 2027-05-12 → 2027-05-13 (+1d) |  | -141d → -142d |
| RHD4CZ1C081PT1502 | Backfilling and warning tape works for HDPE Pipline 200 mm - (RD-C-8 /1)-Z1-C081-PT | 2027-05-13 → 2027-05-19 (+6d) | 2027-05-25 → 2027-05-26 (+1d) |  | -141d → -142d |
| 6848 | **RHD4-02-002-C081-(PT)-HDPE Pipes - 110 mm diameter** | 2027-05-26 → 2027-05-27 (+1d) | 2027-06-10 → 2027-06-12 (+2d) |  |  |
| RHD4CZ1C081PT1100 | Excavation works for HDPE Pipline 110 mm - (RD-C-8 /1)-Z1-C081-PT | 2027-05-26 → 2027-05-27 (+1d) | 2027-05-29 → 2027-05-30 (+1d) |  | -128d → -129d |
| RHD4CZ1C081PT1200 | Bedding works for HDPE Pipline 110 mm - (RD-C-8 /1)-Z1-C081-PT | 2027-05-30 → 2027-05-31 (+1d) | 2027-05-31 → 2027-06-01 (+1d) |  | -128d → -129d |
| RHD4CZ1C081PT1300 | Installing for HDPE Pipline 110 mm - (RD-C-8 /1)-Z1-C081-PT | 2027-06-01 → 2027-06-02 (+1d) | 2027-06-05 → 2027-06-06 (+1d) |  | -128d → -129d |
| RHD4CZ1C081PT1400 | Primary Test for HDPE Pipline 110 mm - (RD-C-8 /1)-Z1-C081-PT | 2027-06-06 → 2027-06-07 (+1d) | 2027-06-07 → 2027-06-08 (+1d) |  | -128d → -129d |
| RHD4CZ1C081PT1500 | Backfilling and warning tape works for HDPE Pipline 110 mm - (RD-C-8 /1)-Z1-C081-PT | 2027-06-08 → 2027-06-09 (+1d) | 2027-06-10 → 2027-06-12 (+2d) |  | -128d → -129d |
| 421 | **RHD4-02-002-C081-(PT)-Gate Valves (Direct Buried)** | 2027-06-12 → 2027-06-13 (+1d) | 2027-06-15 → 2027-06-16 (+1d) |  |  |

| ID | Task | Start | Finish | Total float |
| --- | --- | --- | --- | --- |
| RHD4CZ1C081PT3100 | Installation for Direct Buried Gate Valves - (RD-C-8 /1)-Z1-C081-PT | 2027-06-12 → 2027-06-13 (+1d) | 2027-06-13 → 2027-06-14 (+1d) | -128d → -129d |
| RHD4CZ1C081PT3200 | Stem and Service box for Direct Buried Gate Valves - (RD-C-8 /1)-Z1-C081-PT | 2027-06-14 → 2027-06-15 (+1d) | 2027-06-15 → 2027-06-16 (+1d) | -128d → -129d |
| 426 | **RHD4-02-002-C081-(PT)-Air Valve Chambers** | 2027-05-30 → 2027-05-31 (+1d) | 2027-06-07 → 2027-06-08 (+1d) |  |
| RHD4CZ1C081PT2102 | Excavation and Bedding for Air Valve Chambers for Potable Water Network - (RD-C-8 /1)-Z1-C081-PT | 2027-05-30 → 2027-05-31 (+1d) | 2027-05-31 → 2027-06-01 (+1d) | -127d → -128d |
| RHD4CZ1C081PT2202 | PC works for Air Valve Chambers for Potable Water Network - (RD-C-8 /1)-Z1-C081-PT | 2027-06-01 → 2027-06-02 (+1d) | 2027-06-02 → 2027-06-03 (+1d) | -127d → -128d |
| RHD4CZ1C081PT2302 | Installation for Air Valve Chambers for Potable Water Network - (RD-C-8 /1)-Z1-C081-PT | 2027-06-03 → 2027-06-05 (+2d) | 2027-06-05 → 2027-06-06 (+1d) | -127d → -128d |
| RHD4CZ1C081PT2402 | Backfilling works for Air Valve Chambers for Potable Water Network - (RD-C-8 /1)-Z1-C081-PT | 2027-06-06 → 2027-06-07 (+1d) | 2027-06-07 → 2027-06-08 (+1d) | -127d → -128d |
| 427 | **RHD4-02-002-C081-(PT)-Air Valves** | 2027-06-03 → 2027-06-05 (+2d) | 2027-06-09 → 2027-06-10 (+1d) |  |
| RHD4CZ1C081PT3103 | Installation for Air Valves for Potable Water Network - (RD-C-8 /1)-Z1-C081-PT | 2027-06-03 → 2027-06-05 (+2d) | 2027-06-05 → 2027-06-06 (+1d) | -125d → -126d |
| RHD4CZ1C081PT3203 | Stem and Service box for Air Valves for Potable Water Network - (RD-C-8 /1)-Z1-C081-PT | 2027-06-08 → 2027-06-09 (+1d) | 2027-06-09 → 2027-06-10 (+1d) | -127d → -128d |
| 428 | **RHD4-02-002-C081-(PT)-Fire Hydrant** | 2027-06-10 → 2027-06-12 (+2d) | 2027-09-13 → 2027-09-09 (-4d) |  |
| RHD4CZ1C081PT4100 | Excavation and Bedding and Pipe Installation for Fire Hydrant - (RD-C-8 /1)-Z1-C081-PT | 2027-06-10 → 2027-06-12 (+2d) | 2027-06-14 → 2027-06-15 (+1d) | -127d → -128d |
| RHD4CZ1C081PT4200 | Valve Installation for Fire Hydrant - (RD-C-8 /1)-Z1-C081-PT | 2027-09-01 → 2027-08-24 (-8d) | 2027-09-04 → 2027-08-26 (-9d) | -194d → -187d |
| RHD4CZ1C081PT4300 | Stem for Fire Hydrant - (RD-C-8 /1)-Z1-C081-PT | 2027-09-05 → 2027-08-29 (-7d) | 2027-09-07 → 2027-08-31 (-7d) | -194d → -188d |
| RHD4CZ1C081PT4400 | Fire Installation for Fire Hydrant - (RD-C-8 /1)-Z1-C081-PT | 2027-09-08 → 2027-09-01 (-7d) | 2027-09-11 → 2027-09-04 (-7d) | -194d → -188d |
| RHD4CZ1C081PT4500 | Protection Barriers for Fire Hydrant - (RD-C-8 /1)-Z1-C081-PT | 2027-09-12 → 2027-09-08 (-4d) | 2027-09-13 → 2027-09-09 (-4d) | -194d → -191d |
| 430 | **RHD4-02-002-Z1-C081-Irrigation Network - IRR** | 2027-04-24 → 2027-04-25 (+1d) | 2027-05-23 → 2027-05-24 (+1d) |  |
| 6863 | **RHD4-02-002-C081-(IRR)-HDPE Pipes - 160 mm diameter** | 2027-04-24 → 2027-04-25 (+1d) | 2027-05-04 → 2027-05-05 (+1d) |  |
| RHD4CZ1C081IRR1100 | Excavation works for HDPE Pipline 160 mm - (RD-C-8 /1)-Z1-C081-IRR | 2027-04-24 → 2027-04-25 (+1d) | 2027-04-25 → 2027-04-26 (+1d) | -150d → -151d |
| RHD4CZ1C081IRR1200 | Bedding works for HDPE Pipline 160 mm - (RD-C-8 /1)-Z1-C081-IRR | 2027-04-26 → 2027-04-27 (+1d) | 2027-04-27 → 2027-04-28 (+1d) | -150d → -151d |
| RHD4CZ1C081IRR1300 | Installing for HDPE Pipline 160 mm - (RD-C-8 /1)-Z1-C081-IRR | 2027-04-28 → 2027-04-29 (+1d) | 2027-04-29 → 2027-05-01 (+2d) | -150d → -151d |
| RHD4CZ1C081IRR1400 | Primary Test for HDPE Pipline 160 mm - (RD-C-8 /1)-Z1-C081-IRR | 2027-05-01 → 2027-05-02 (+1d) | 2027-05-02 → 2027-05-03 (+1d) | -150d → -151d |
| RHD4CZ1C081IRR1500 | Backfilling and warning tape works for HDPE Pipline 160 mm - (RD-C-8 /1)-Z1-C081-IRR | 2027-05-03 → 2027-05-04 (+1d) | 2027-05-04 → 2027-05-05 (+1d) | -150d → -151d |
| 6876 | **RHD4-02-002-C081-(IRR)-Air Valve Chamber** | 2027-05-05 → 2027-05-06 (+1d) | 2027-05-13 → 2027-05-19 (+6d) |  |
| RHD4CZ1C081IRR2102 | Excavation and Bedding for Valve Chamber for Irrigation Network - (RD-C-8 /1)-Z1-C081-IRR | 2027-05-05 → 2027-05-06 (+1d) | 2027-05-06 → 2027-05-08 (+2d) | -150d → -151d |
| RHD4CZ1C081IRR2202 | PC works for Valve Chamber for Irrigation Network - (RD-C-8 /1)-Z1-C081-IRR | 2027-05-08 → 2027-05-09 (+1d) | 2027-05-09 → 2027-05-10 (+1d) | -150d → -151d |
| RHD4CZ1C081IRR2302 | Installation for Valve Chamber for Irrigation Network - (RD-C-8 /1)-Z1-C081-IRR | 2027-05-10 → 2027-05-11 (+1d) | 2027-05-11 → 2027-05-12 (+1d) | -150d → -151d |
| RHD4CZ1C081IRR2402 | Backfilling works for Valve Chamber for Irrigation Network - (RD-C-8 /1)-Z1-C081-IRR | 2027-05-12 → 2027-05-13 (+1d) | 2027-05-13 → 2027-05-19 (+6d) | -150d → -151d |
| 6877 | **RHD4-02-002-C081-(IRR)-Air Valves** | 2027-05-19 → 2027-05-20 (+1d) | 2027-05-23 → 2027-05-24 (+1d) |  |
| RHD4CZ1C081IRR3103 | Installation for Air Valves for Irrigation Network - (RD-C-8 /1)-Z1-C081-IRR | 2027-05-19 → 2027-05-20 (+1d) | 2027-05-20 → 2027-05-22 (+2d) | -150d → -151d |
| RHD4CZ1C081IRR3203 | Stem and Service box for Air Valves for Irrigation Network - (RD-C-8 /1)-Z1-C081-IRR | 2027-05-22 → 2027-05-23 (+1d) | 2027-05-23 → 2027-05-24 (+1d) | -150d → -151d |
| 435 | **RHD4-02-002-C081-(IRR)-HDPE Pipes - 315 mm diameter** | 2027-04-24 → 2027-04-25 (+1d) | 2027-05-20 → 2027-05-22 (+2d) |  |
| RHD4CZ1C081IRR1104 | Excavation works for HDPE Pipline 315 mm - (RD-C-8 /1)-Z1-C081-IRR | 2027-04-24 → 2027-04-25 (+1d) | 2027-04-28 → 2027-04-29 (+1d) | -151d → -152d |
| RHD4CZ1C081IRR1204 | Bedding works for HDPE Pipline 315 mm - (RD-C-8 /1)-Z1-C081-IRR | 2027-04-29 → 2027-05-01 (+2d) | 2027-05-03 → 2027-05-04 (+1d) | -151d → -152d |
| RHD4CZ1C081IRR1304 | Installing for HDPE Pipline 315 mm - (RD-C-8 /1)-Z1-C081-IRR | 2027-05-04 → 2027-05-05 (+1d) | 2027-05-09 → 2027-05-10 (+1d) | -151d → -152d |
| RHD4CZ1C081IRR1404 | Primary Test for HDPE Pipline 315 mm - (RD-C-8 /1)-Z1-C081-IRR | 2027-05-10 → 2027-05-11 (+1d) | 2027-05-11 → 2027-05-12 (+1d) | -151d → -152d |
| RHD4CZ1C081IRR1504 | Backfilling and warning tape works for HDPE Pipline 315 mm - (RD-C-8 /1)-Z1-C081-IRR | 2027-05-12 → 2027-05-13 (+1d) | 2027-05-20 → 2027-05-22 (+2d) | -151d → -152d |
| 439 | **RHD4-02-002-C081-(IRR)-Gate Valves (Direct Buried)** | 2027-05-10 → 2027-05-11 (+1d) | 2027-05-13 → 2027-05-19 (+6d) |  |
| RHD4CZ1C081IRR3100 | Installation for Direct Buried Gate Valves - (RD-C-8 /1)-Z1-C081-IRR | 2027-05-10 → 2027-05-11 (+1d) | 2027-05-11 → 2027-05-12 (+1d) | -150d → -151d |
| RHD4CZ1C081IRR3200 | Stem and Service box for Direct Buried Gate Valves - (RD-C-8 /1)-Z1-C081-IRR | 2027-05-12 → 2027-05-13 (+1d) | 2027-05-13 → 2027-05-19 (+6d) | -150d → -151d |
| 464 | **RHD4-02-002-Z1-C081-Medium Voltage Network - MV** | 2027-06-19 → 2027-06-14 (-5d) | 2027-07-21 → 2027-07-17 (-4d) |  |
| 465 | **RHD4-02-002-C081-(MV)-Medium Voltage cable trench** | 2027-06-19 → 2027-06-14 (-5d) | 2027-07-13 → 2027-07-08 (-5d) |  |
| RHD4CZ1C081MV1100 | Excavation for Medium Voltage Trench - (RD-C-8 /1)-Z1-C081-MV | 2027-06-19 → 2027-06-14 (-5d) | 2027-06-24 → 2027-06-20 (-4d) | -198d → -194d |
| RHD4CZ1C081MV1200 | Trench Backfilling for Medium Voltage Network - (RD-C-8 /1)-Z1-C081-MV | 2027-07-07 → 2027-07-03 (-4d) | 2027-07-13 → 2027-07-08 (-5d) | -198d → -194d |
| 467 | **RHD4-02-002-C081-(MV)-Medium Voltage cables 3Cx 500 mm²** | 2027-06-26 → 2027-06-21 (-5d) | 2027-07-19 → 2027-07-14 (-5d) |  |
| RHD4CZ1C081MV3100 | Installation of Medium Voltage Cables 3Cx 500 mm² - (RD-C-8 /1)-Z1-C081-MV | 2027-06-26 → 2027-06-21 (-5d) | 2027-07-04 → 2027-06-29 (-5d) | -198d → -194d |
| RHD4CZ1C081MV3200 | Joints Installation of Medium Voltage Cables 3Cx 500 mm² - (RD-C-8 /1)-Z1-C081-MV | 2027-07-05 → 2027-06-30 (-5d) | 2027-07-06 → 2027-07-01 (-5d) | -198d → -194d |
| RHD4CZ1C081MV3300 | Testing of Medium Voltage Cables 3Cx 500 mm² - (RD-C-8 /1)-Z1-C081-MV | 2027-07-14 → 2027-07-10 (-4d) | 2027-07-17 → 2027-07-12 (-5d) | -126d → -122d |
| RHD4CZ1C081MV3400 | Termination of Medium Voltage Cables 3Cx 500 mm² - (RD-C-8 /1)-Z1-C081-MV | 2027-07-18 → 2027-07-13 (-5d) | 2027-07-19 → 2027-07-14 (-5d) | -126d → -122d |
| 468 | **RHD4-02-002-C081-(MV)-Medium Voltage cables 3Cx 50 mm²** | 2027-07-20 → 2027-07-15 (-5d) | 2027-07-21 → 2027-07-17 (-4d) |  |
| RHD4CZ1C081MV3401 | Termination of Medium Voltage Cables 3Cx 50 mm² - (RD-C-8 /1)-Z1-C081-MV | 2027-07-20 → 2027-07-15 (-5d) | 2027-07-21 → 2027-07-17 (-4d) | -126d → -122d |
| 5388 | **RHD4-02-002-C081-(MV)-Normally open Point (Outdoor Type)** | 2027-07-14 → 2027-07-10 (-4d) | 2027-07-18 → 2027-07-13 (-5d) |  |
| RHD4CZ1C081MV4100 | Installation for Normally open Point - (RD-C-8 /1)-Z1-C081-MV | 2027-07-14 → 2027-07-10 (-4d) | 2027-07-15 → 2027-07-11 (-4d) | -198d → -194d |
| RHD4CZ1C081MV4200 | Termination for Normally open Point - (RD-C-8 /1)-Z1-C081-MV | 2027-07-17 → 2027-07-12 (-5d) | 2027-07-18 → 2027-07-13 (-5d) | -198d → -194d |
| 471 | **RHD4-02-002-Z1-C081-Low Voltage Network - LV** | 2027-05-22 → 2027-05-23 (+1d) | 2027-06-24 → 2027-06-26 (+2d) |  |
| 472 | **RHD4-02-002-C081-(LV)-Low Voltage duct banks** | 2027-05-22 → 2027-05-23 (+1d) | 2027-06-03 → 2027-06-05 (+2d) |  |
| RHD4CZ1C081LV2100 | Excavation of Duct Banks for Low Voltage Network - (RD-C-8 /1)-Z1-C081-LV | 2027-05-22 → 2027-05-23 (+1d) | 2027-05-24 → 2027-05-25 (+1d) | -151d → -152d |
| RHD4CZ1C081LV2200 | Installation of Duct Banks for Low Voltage Network - (RD-C-8 /1)-Z1-C081-LV | 2027-05-25 → 2027-05-26 (+1d) | 2027-05-29 → 2027-05-30 (+1d) | -151d → -152d |
| RHD4CZ1C081LV2300 | Pouring of Duct Banks for Low Voltage Network - (RD-C-8 /1)-Z1-C081-LV | 2027-05-30 → 2027-05-31 (+1d) | 2027-06-01 → 2027-06-02 (+1d) | -151d → -152d |
| RHD4CZ1C081LV2400 | Backfilling of Duct Banks for Low Voltage Network - (RD-C-8 /1)-Z1-C081-LV | 2027-06-02 → 2027-06-03 (+1d) | 2027-06-03 → 2027-06-05 (+2d) | -149d → -150d |
| 473 | **RHD4-02-002-C081-(LV)-Low Voltage Drawpit** | 2027-06-02 → 2027-06-03 (+1d) | 2027-06-06 → 2027-06-07 (+1d) |  |
| RHD4CZ1C081LV5100 | Excavation of Drawpit size 900x900x1000mm for Low Voltage Network - (RD-C-8 /1)-Z1-C081-LV | 2027-06-02 → 2027-06-03 (+1d) | 2027-06-03 → 2027-06-05 (+2d) | -151d → -152d |
| RHD4CZ1C081LV5200 | Installation of Drawpit size 900x900x1000mm for Low Voltage Network - (RD-C-8 /1)-Z1-C081-LV | 2027-06-05 → 2027-06-06 (+1d) | 2027-06-06 → 2027-06-07 (+1d) | -151d → -152d |
| 474 | **RHD4-02-002-C081-(LV)-Low Voltage cables** | 2027-06-07 → 2027-06-08 (+1d) | 2027-06-24 → 2027-06-26 (+2d) |  |
| RHD4CZ1C081LV3100 | Excavation for Low Voltage Cables for Low Voltage Network - (RD-C-8 /1)-Z1-C081-LV | 2027-06-07 → 2027-06-08 (+1d) | 2027-06-12 → 2027-06-13 (+1d) | -151d → -152d |
| RHD4CZ1C081LV3200 | Cable Laying of Low Voltage Cables for Low Voltage Network - (RD-C-8 /1)-Z1-C081-LV | 2027-06-13 → 2027-06-14 (+1d) | 2027-06-16 → 2027-06-17 (+1d) | -151d → -152d |
| RHD4CZ1C081LV3300 | Warning tape and Backfill for Low Voltage Cables for Low Voltage Network - (RD-C-8 /1)-Z1-C081-LV | 2027-06-17 → 2027-06-19 (+2d) | 2027-06-21 → 2027-06-22 (+1d) | -151d → -152d |
| RHD4CZ1C081LV3400 | Testing of Low Voltage Cables for Low Voltage Network - (RD-C-8 /1)-Z1-C081-LV | 2027-06-22 → 2027-06-23 (+1d) | 2027-06-24 → 2027-06-26 (+2d) | -151d → -152d |
| 477 | **RHD4-02-002-Z1-C081-Street Lighting Network - SL** | 2027-06-07 → 2027-06-08 (+1d) | 2027-08-22 → 2027-08-23 (+1d) |  |
| 478 | **RHD4-02-002-C081-(SL)-Street Lighting duct banks** | 2027-06-07 → 2027-06-08 (+1d) | 2027-06-26 → 2027-06-27 (+1d) |  |

| ID | Task | Start | Finish | Complete | Total float |
| --- | --- | --- | --- | --- | --- |
| RHD4CZ1C081SL2100 | Excavation of Duct Banks for Street Lighting Network - (RD-C-8 /1)-Z1-C081-SL | 2027-06-07 → 2027-06-08 (+1d) | 2027-06-10 → 2027-06-12 (+2d) |  | -149d → -150d |
| RHD4CZ1C081SL2200 | Installation of Duct Banks for Street Lighting Network - (RD-C-8 /1)-Z1-C081-SL | 2027-06-12 → 2027-06-13 (+1d) | 2027-06-17 → 2027-06-19 (+2d) |  | -149d → -150d |
| RHD4CZ1C081SL2300 | Pouring of Duct Banks for Street Lighting Network - (RD-C-8 /1)-Z1-C081-SL | 2027-06-19 → 2027-06-20 (+1d) | 2027-06-22 → 2027-06-23 (+1d) |  | -149d → -150d |
| RHD4CZ1C081SL2400 | Backfilling of Duct Banks for Street Lighting Network - (RD-C-8 /1)-Z1-C081-SL | 2027-06-23 → 2027-06-24 (+1d) | 2027-06-26 → 2027-06-27 (+1d) |  | -149d → -150d |
| 479 | **RHD4-02-002-C081-(SL)-Street Lighting Drawpit** | 2027-07-01 → 2027-07-03 (+2d) | 2027-07-05 → 2027-07-06 (+1d) |  |  |
| RHD4CZ1C081SL5100 | Excavation of Drawpit size 600x600x900mm for Street Lighting Network - (RD-C-8 /1)-Z1-C081-SL | 2027-07-01 → 2027-07-03 (+2d) | 2027-07-03 → 2027-07-04 (+1d) |  | -149d → -150d |
| RHD4CZ1C081SL5200 | Installation of Drawpit size 600x600x900mm for Street Lighting Network - (RD-C-8 /1)-Z1-C081-SL | 2027-07-04 → 2027-07-05 (+1d) | 2027-07-05 → 2027-07-06 (+1d) |  | -149d → -150d |
| 480 | **RHD4-02-002-C081-(SL)-Street Lighting cables** | 2027-07-11 → 2027-07-12 (+1d) | 2027-08-09 → 2027-08-10 (+1d) |  |  |
| RHD4CZ1C081SL3100 | Excavation for Street Lighting Cables for Street Lighting Network - (RD-C-8 /1)-Z1-C081-SL | 2027-07-11 → 2027-07-12 (+1d) | 2027-07-19 → 2027-07-20 (+1d) |  | -149d → -150d |
| RHD4CZ1C081SL3200 | Cable Laying of Street Lighting Cables for Street Lighting Network - (RD-C-8 /1)-Z1-C081-SL | 2027-07-20 → 2027-07-21 (+1d) | 2027-07-27 → 2027-07-28 (+1d) |  | -149d → -150d |
| RHD4CZ1C081SL3300 | Warning tape and Backfill for Street Lighting Cables for Street Lighting Network - (RD-C-8 /1)-Z1-C081-SL | 2027-07-28 → 2027-07-29 (+1d) | 2027-08-04 → 2027-08-05 (+1d) |  | -149d → -150d |
| RHD4CZ1C081SL3400 | Testing of Street Lighting Cables for Street Lighting Network - (RD-C-8 /1)-Z1-C081-SL | 2027-08-05 → 2027-08-07 (+2d) | 2027-08-09 → 2027-08-10 (+1d) |  | -149d → -150d |
| 481 | **RHD4-02-002-C081-(SL)-Street Lighting Poles** | 2027-06-27 → 2027-06-28 (+1d) | 2027-08-22 → 2027-08-23 (+1d) |  |  |
| RHD4CZ1C081SL1100 | Excavation for RC Base for Lighting Poles for Street Lighting Network - (RD-C-8 /1)-Z1-C081-SL | 2027-06-27 → 2027-06-28 (+1d) | 2027-06-30 → 2027-07-01 (+1d) |  | -149d → -150d |
| RHD4CZ1C081SL1200 | Installation for RC Base for Lighting Poles for Street Lighting Network - (RD-C-8 /1)-Z1-C081-SL | 2027-07-01 → 2027-07-03 (+2d) | 2027-07-05 → 2027-07-06 (+1d) |  | -149d → -150d |
| RHD4CZ1C081SL1300 | Backfill for RC Base for Lighting Poles for Street Lighting Network - (RD-C-8 /1)-Z1-C081-SL | 2027-07-06 → 2027-07-07 (+1d) | 2027-07-10 → 2027-07-11 (+1d) |  | -149d → -150d |
| RHD4CZ1C081SL1400 | Installation for Lighting Poles for Street Lighting Network - (RD-C-8 /1)-Z1-C081-SL | 2027-08-10 → 2027-08-11 (+1d) | 2027-08-15 → 2027-08-16 (+1d) |  | -149d → -150d |
| RHD4CZ1C081SL1500 | Luminaire Installation for Lighting Poles for Street Lighting Network - (RD-C-8 /1)-Z1-C081-SL | 2027-08-16 → 2027-08-17 (+1d) | 2027-08-22 → 2027-08-23 (+1d) |  | -136d → -137d |
| 482 | **RHD4-02-002-C081-(SL)-Street Lighting Feeder Pillars** | 2027-08-05 → 2027-08-07 (+2d) | 2027-08-17 → 2027-08-18 (+1d) |  |  |
| RHD4CZ1C081SL4100 | Leveling for Distribution Pillars for Street Lighting Network - (RD-C-8 /1)-Z1-C081-SL | 2027-08-05 → 2027-08-07 (+2d) | 2027-08-07 → 2027-08-08 (+1d) |  | -144d → -145d |
| RHD4CZ1C081SL4200 | Lean Concrete for Distribution Pillars for Street Lighting Network - (RD-C-8 /1)-Z1-C081-SL | 2027-08-08 → 2027-08-09 (+1d) | 2027-08-09 → 2027-08-10 (+1d) |  | -144d → -145d |
| RHD4CZ1C081SL4300 | Installation of Distribution Pillars for Street Lighting Network - (RD-C-8 /1)-Z1-C081-SL | 2027-08-16 → 2027-08-17 (+1d) | 2027-08-17 → 2027-08-18 (+1d) |  | -149d → -150d |
| 483 | **RHD4-02-002-C081-(SL)-Street Lighting Earthing System** | 2027-08-18 → 2027-08-19 (+1d) | 2027-08-19 → 2027-08-21 (+2d) |  |  |
| RHD4CZ1C081SL6100 | Installation of Earthing for Lighting Poles and Fedder Pillers for Street Lighting Network - (RD-C-8 /1)-Z1-C081-SL | 2027-08-18 → 2027-08-19 (+1d) | 2027-08-19 → 2027-08-21 (+2d) |  | -149d → -150d |
| 489 | **RHD4-02-002-Z1-C081-Telecommunications Network - TC** | 2027-01-31 → 2027-02-01 (+1d) | 2027-09-29 → 2027-09-30 (+1d) |  |  |
| 490 | **RHD4-02-002-C081-(TC)-Telecommunications Ducts** | 2027-08-21 → 2027-08-22 (+1d) | 2027-09-29 → 2027-09-30 (+1d) |  |  |
| RHD4CZ1C081TC2100 | Excavation of HDPE Ducts for Telecom Network - (RD-C-8 /1)-Z1-C081-TC | 2027-08-21 → 2027-08-22 (+1d) | 2027-08-31 → 2027-09-01 (+1d) |  | -149d → -150d |
| RHD4CZ1C081TC2200 | Installation of HDPE Ducts for Telecom Network - (RD-C-8 /1)-Z1-C081-TC | 2027-09-01 → 2027-09-02 (+1d) | 2027-09-16 → 2027-09-18 (+2d) |  | -142d → -143d |
| RHD4CZ1C081TC2400 | Backfilling of HDPE Ducts for Telecom Network - (RD-C-8 /1)-Z1-C081-TC | 2027-09-18 → 2027-09-19 (+1d) | 2027-09-29 → 2027-09-30 (+1d) |  | -133d → -134d |
| 491 | **RHD4-02-002-C081-(TC)-Telecommunications Manholes** | 2027-09-01 → 2027-09-02 (+1d) | 2027-09-09 → 2027-09-11 (+2d) |  |  |
| RHD4CZ1C081TC5100 | Excavation for Manholes for Telecom Network - (RD-C-8 /1)-Z1-C081-TC | 2027-09-01 → 2027-09-02 (+1d) | 2027-09-05 → 2027-09-06 (+1d) |  | -146d → -147d |
| RHD4CZ1C081TC5200 | Installation of Manholes for Telecom Network - (RD-C-8 /1)-Z1-C081-TC | 2027-09-06 → 2027-09-07 (+1d) | 2027-09-09 → 2027-09-11 (+2d) |  | -146d → -147d |
| 5411 | **RHD4-02-002-C081-(TC)-Telecomminications Road Crossings** | 2027-01-31 → 2027-02-01 (+1d) | 2027-02-09 → 2027-02-10 (+1d) |  |  |
| RHD4CZ1C081TC3100 | Excavation for Road Crossings for Telecom Network - (RD-C-8 /1)-Z1-C081-TC | 2027-01-31 → 2027-02-01 (+1d) | 2027-02-01 → 2027-02-02 (+1d) |  | -145.02d → -146.02d |
| RHD4CZ1C081TC3200 | Installation of Road Crossings for Telecom Network - (RD-C-8 /1)-Z1-C081-TC | 2027-02-02 → 2027-02-03 (+1d) | 2027-02-04 → 2027-02-06 (+2d) |  | -145.02d → -146.02d |
| RHD4CZ1C081TC3300 | Pouring of Road Crossings for Telecom Network - (RD-C-8 /1)-Z1-C081-TC | 2027-02-04 → 2027-02-06 (+2d) | 2027-02-07 → 2027-02-08 (+1d) |  | -145.02d → -146.02d |
| RHD4CZ1C081TC3400 | Backfilling of Road Crossings for Telecom Network - (RD-C-8 /1)-Z1-C081-TC | 2027-02-07 → 2027-02-08 (+1d) | 2027-02-09 → 2027-02-10 (+1d) |  | -145.02d → -146.02d |
| 493 | **RHD4-02-002-Z1-C081-Information and Communication Technologies - ICT** | 2027-08-05 → 2027-08-07 (+2d) | 2027-09-21 → 2027-09-22 (+1d) |  |  |
| 494 | **RHD4-02-002-C081-(ICT)-Information and Communication Technologies Ducts** | 2027-08-05 → 2027-08-07 (+2d) | 2027-09-21 → 2027-09-22 (+1d) |  |  |
| RHD4CZ1C081ICT2100 | Excavation of HDPE Ducts for ICT Network - (RD-C-8 /1)-Z1-C081-ICT | 2027-08-05 → 2027-08-07 (+2d) | 2027-08-16 → 2027-08-17 (+1d) |  | -143d → -144d |
| RHD4CZ1C081ICT2200 | Installation of HDPE Ducts for ICT Network - (RD-C-8 /1)-Z1-C081-ICT | 2027-08-17 → 2027-08-18 (+1d) | 2027-09-02 → 2027-09-04 (+2d) |  | -143d → -144d |
| RHD4CZ1C081ICT2400 | Backfilling of HDPE Ducts for ICT Network - (RD-C-8 /1)-Z1-C081-ICT | 2027-09-11 → 2027-09-12 (+1d) | 2027-09-21 → 2027-09-22 (+1d) |  | -149d → -150d |
| 495 | **RHD4-02-002-C081-(ICT)-Information and Communication Technologies Manholes** | 2027-09-01 → 2027-09-02 (+1d) | 2027-09-09 → 2027-09-11 (+2d) |  |  |
| RHD4CZ1C081ICT5100 | Excavation for Manholes for ICT Network - (RD-C-8 /1)-Z1-C081-ICT | 2027-09-01 → 2027-09-02 (+1d) | 2027-09-05 → 2027-09-06 (+1d) |  | -149d → -150d |
| RHD4CZ1C081ICT5200 | Installation of Manholes for ICT Network - (RD-C-8 /1)-Z1-C081-ICT | 2027-09-06 → 2027-09-07 (+1d) | 2027-09-09 → 2027-09-11 (+2d) |  | -149d → -150d |
| 497 | **RHD4-02-002-Z1-C081-Security Network - CCTV** | 2027-09-30 → 2027-10-02 (+2d) | 2027-11-14 → 2027-11-15 (+1d) |  |  |
| 498 | **RHD4-02-002-C081-(CCTV)-Civil Works** | 2027-09-30 → 2027-10-02 (+2d) | 2027-10-11 → 2027-10-12 (+1d) |  |  |
| RHD4CZ1C081CCTV2100 | Civil Works for Security Network - (RD-C-8 /1)-Z1-C081-CCTV | 2027-09-30 → 2027-10-02 (+2d) | 2027-10-11 → 2027-10-12 (+1d) |  | -133d → -134d |
| 499 | **RHD4-02-002-C081-(CCTV)-CCTV Poles** | 2027-10-12 → 2027-10-13 (+1d) | 2027-10-23 → 2027-10-24 (+1d) |  |  |
| RHD4CZ1C081CCTV1100 | Excavation for RC Base for CCTV Poles for Security Network - (RD-C-8 /1)-Z1-C081-CCTV | 2027-10-12 → 2027-10-13 (+1d) | 2027-10-13 → 2027-10-14 (+1d) |  | -133d → -134d |
| RHD4CZ1C081CCTV1200 | Installation for RC Base for CCTV Poles for Security Network - (RD-C-8 /1)-Z1-C081-CCTV | 2027-10-14 → 2027-10-16 (+2d) | 2027-10-16 → 2027-10-17 (+1d) |  | -133d → -134d |
| RHD4CZ1C081CCTV1300 | Backfill for RC Base for CCTV Poles for Security Network - (RD-C-8 /1)-Z1-C081-CCTV | 2027-10-17 → 2027-10-18 (+1d) | 2027-10-18 → 2027-10-19 (+1d) |  | -133d → -134d |
| RHD4CZ1C081CCTV1400 | Installation for CCTV Poles for Security Network - (RD-C-8 /1)-Z1-C081-CCTV | 2027-10-19 → 2027-10-20 (+1d) | 2027-10-20 → 2027-10-21 (+1d) |  | -133d → -134d |
| RHD4CZ1C081CCTV1500 | Protection post Installation for CCTV Poles for Security Network - (RD-C-8 /1)-Z1-C081-CCTV | 2027-10-21 → 2027-10-23 (+2d) | 2027-10-23 → 2027-10-24 (+1d) |  | -131d → -132d |
| 501 | **RHD4-02-002-C081-(CCTV)-Power and Infrastructure** | 2027-10-21 → 2027-10-23 (+2d) | 2027-10-25 → 2027-10-26 (+1d) |  |  |
| RHD4CZ1C081CCTV4100 | Installation of Power outlet, UPS and midspan for PTZ Camerafor Cameras for Security Network - (RD-C-8 /1)-Z1-C081-CCTV | 2027-10-21 → 2027-10-23 (+2d) | 2027-10-23 → 2027-10-24 (+1d) |  | -133d → -134d |
| RHD4CZ1C081CCTV4200 | Short Range Wireless PoP wireless Bridgefor CCTV Poles for Security Network - (RD-C-8 /1)-Z1-C081-CCTV | 2027-10-24 → 2027-10-25 (+1d) | 2027-10-25 → 2027-10-26 (+1d) |  | -133d → -134d |
| 500 | **RHD4-02-002-C081-(CCTV)-Camera** | 2027-10-26 → 2027-10-27 (+1d) | 2027-10-27 → 2027-10-28 (+1d) |  |  |
| RHD4CZ1C081CCTV3100 | Installation for Cameras for Security Network - (RD-C-8 /1)-Z1-C081-CCTV | 2027-10-26 → 2027-10-27 (+1d) | 2027-10-27 → 2027-10-28 (+1d) |  | -102d → -103d |
| 503 | **RHD4-02-002-C081-(CCTV)-CCTV Panels and Components** | 2027-10-28 → 2027-10-30 (+2d) | 2027-11-14 → 2027-11-15 (+1d) |  |  |
| RHD4CZ1C081CCTV6100 | Installation for CCTV Panels for Security Network - (RD-C-8 /1)-Z1-C081-CCTV | 2027-10-28 → 2027-10-30 (+2d) | 2027-11-14 → 2027-11-15 (+1d) |  | -102d → -103d |
| 1460 | **RHD4-02-002-Z3** |  | 2028-10-26 → 2028-10-23 (-3d) |  |  |
| 1650 | **RHD4-02-002-Z3-C011** |  | 2028-09-19 → 2028-09-16 (-3d) |  |  |
| 1829 | **RHD4-02-002-Z3-C011-Road Works - RD** |  | 2028-09-19 → 2028-09-16 (-3d) |  |  |
| 1830 | **RHD4-02-002-C011-(RD)-Subgrade** |  | 2027-01-19 → 2027-01-26 (+7d) |  |  |
| RHD4CZ3C011RD1100 | Supply, lay and compaction subgrade compacted thickness 300 mm for Roads - (RD-C-1 /1)-Z3-C011-RD |  | 2027-01-19 → 2027-01-26 (+7d) |  | -120d → -124d |
| 1831 | **RHD4-02-002-C011-(RD)-Aggregate Base Course** |  | 2027-01-23 → 2027-01-30 (+7d) |  |  |
| RHD4CZ3C011RD2100 | Supply, lay and compaction Aggregate base course compacted thickness 300 mmfor Roads - (RD-C-1 /1)-Z3-C011-RD |  | 2027-01-23 → 2027-01-30 (+7d) |  | -111d → -115d |
| 1832 | **RHD4-02-002-C011-(RD)-Bituminous base course Two Layers, including (MC1)&(RC2)** |  | 2028-07-15 → 2028-07-11 (-4d) |  |  |
| RHD4CZ3C011RD3100 | Supply, lay and Asphaltic base course including Prime Coat (MC1) for 1st Layer - (RD-C-1 /1)-Z3-C011-RD |  | 2027-02-06 → 2027-02-13 (+7d) | 90% → 61% | -120d → -124d |

| ID | Task | Start | Finish | Total float |
| --- | --- | --- | --- | --- |
| RHD4CZ3C011RD3200 | Supply, lay and Asphaltic base course including Tack Coat (RC2) for 2nd Layer - (RD-C-1 /1)-Z3-C011-RD | 2028-07-10 → 2028-07-08 (-2d) | 2028-07-15 → 2028-07-11 (-4d) | -177.02d → -175d |
| 1834 | **RHD4-02-002-C011-(RD)-Precast Concrete Curb** | 2028-07-15 → 2028-07-12 (-3d) | 2028-07-19 → 2028-07-16 (-3d) |  |
| RHD4CZ3C011RD5100 | Supply and installation Precast Concrete Kerb for Roads - (RD-C-1 /1)-Z3-C011-RD | 2028-07-15 → 2028-07-12 (-3d) | 2028-07-19 → 2028-07-16 (-3d) | -177.02d → -175d |
| 1837 | **RHD4-02-002-C011-(RD)-Traffic Signage** | 2028-09-10 → 2028-09-06 (-4d) | 2028-09-19 → 2028-09-16 (-3d) |  |
| RHD4CZ3C011RD8100 | Installation of Traffic Signage for Road Network - (RD-C-1 /1)-Z3-C011-RD | 2028-09-10 → 2028-09-06 (-4d) | 2028-09-19 → 2028-09-16 (-3d) | -179d → -176d |
| 1833 | **RHD4-02-002-C011-(RD)-Bituminous concrete wearing course including tack coat (RC2)** | 2028-07-19 → 2028-07-17 (-2d) | 2028-07-23 → 2028-07-19 (-4d) |  |
| RHD4CZ3C011RD4100 | Supply, lay and compaction Asphaltic wearing course including tack Coat (RC2)for Road Network - (RD-C-1 /1)-Z3-C011-RD | 2028-07-19 → 2028-07-17 (-2d) | 2028-07-23 → 2028-07-19 (-4d) | -177.02d → -175d |
| 1838 | **RHD4-02-002-C011-(RD)-Speed Table and Wheel Stopper** | 2028-07-26 → 2028-07-20 (-6d) | 2028-07-29 → 2028-07-23 (-6d) |  |
| RHD4CZ3C011RD9100 | Installation for Speed Bump for Road Network - (RD-C-1 /1)-Z3-C011-RD | 2028-07-26 → 2028-07-20 (-6d) | 2028-07-29 → 2028-07-23 (-6d) | -180d → -175d |
| 1836 | **RHD4-02-002-C011-(RD)-Pavement Marking** | 2028-07-30 → 2028-07-24 (-6d) | 2028-08-02 → 2028-07-27 (-6d) |  |
| RHD4CZ3C011RD7100 | Pavement Markings for Road Network - (RD-C-1 /1)-Z3-C011-RD | 2028-07-30 → 2028-07-24 (-6d) | 2028-08-02 → 2028-07-27 (-6d) | -180d → -175d |
| 4299 | **RHD4-02-002-Z3-C011-Concrete Box Culvert - ST** |  | 2027-08-25 → 2027-08-26 (+1d) |  |
| 4300 | **RHD4-02-002-C011-(ST)-Concrete Box Culvert** |  | 2027-08-25 → 2027-08-26 (+1d) |  |
| RHD4CZ3C011ST4200 | PC works for Box Culvert - (RD-C-1/1)-Z3-C011-ST |  | 2027-07-13 → 2027-07-14 (+1d) | -173d → -174d |
| RHD4CZ3C011ST4400 | Raft works for Box Culvert - (RD-C-1/1)-Z3-C011-ST |  | 2027-07-24 → 2027-07-25 (+1d) | -173d → -174d |
| RHD4CZ3C011ST4500 | Wall and slab works for Box Culvert - (RD-C-1/1)-Z3-C011-ST |  | 2027-08-03 → 2027-08-04 (+1d) | -173d → -174d |
| RHD4CZ3C011ST4700 | Backfilling works for Box Culvert - (RD-C-1/1)-Z3-C011-ST | 2027-08-04 → 2027-08-05 (+1d) | 2027-08-16 → 2027-08-17 (+1d) | -173d → -174d |
| RHD4CZ3C011ST4600 | Insulation and Testing for Box Culvert - (RD-C-1/1)-Z3-C011-ST | 2027-08-17 → 2027-08-18 (+1d) | 2027-08-25 → 2027-08-26 (+1d) | -173d → -174d |
| 1740 | **RHD4-02-002-Z3-C011-Potable Network - PT** |  | 2027-08-11 → 2027-08-12 (+1d) |  |
| 1745 | **RHD4-02-002-C011-(PT)-HDPE Pipes - 450 mm diameter** | 2027-07-01 → 2027-07-03 (+2d) | 2027-07-25 → 2027-07-26 (+1d) |  |
| RHD4CZ3C011PT1104 | Excavation works for HDPE Pipline 450 mm - (RD-C-1 /1)-Z3-C011-PT | 2027-07-01 → 2027-07-03 (+2d) | 2027-07-05 → 2027-07-06 (+1d) | -169d → -170d |
| RHD4CZ3C011PT1204 | Bedding works for HDPE Pipline 450 mm - (RD-C-1 /1)-Z3-C011-PT | 2027-07-06 → 2027-07-07 (+1d) | 2027-07-08 → 2027-07-10 (+2d) | -169d → -170d |
| RHD4CZ3C011PT1304 | Installing for HDPE Pipline 450 mm - (RD-C-1 /1)-Z3-C011-PT | 2027-07-10 → 2027-07-11 (+1d) | 2027-07-14 → 2027-07-15 (+1d) | -169d → -170d |
| RHD4CZ3C011PT1404 | Primary Test for HDPE Pipline 450 mm - (RD-C-1 /1)-Z3-C011-PT | 2027-07-19 → 2027-07-20 (+1d) | 2027-07-20 → 2027-07-21 (+1d) | -139d → -140d |
| RHD4CZ3C011PT1504 | Backfilling and warning tape works for HDPE Pipline 450 mm - (RD-C-1 /1)-Z3-C011-PT | 2027-07-21 → 2027-07-22 (+1d) | 2027-07-25 → 2027-07-26 (+1d) | -139d → -140d |
| 1744 | **RHD4-02-002-C011-(PT)-HDPE Pipes - 400 mm diameter** |  | 2027-07-24 → 2027-07-25 (+1d) |  |
| RHD4CZ3C011PT1103 | Excavation works for HDPE Pipline 400 mm - (RD-C-1 /1)-Z3-C011-PT |  | 2027-07-08 → 2027-07-10 (+2d) | -167d → -168d |
| RHD4CZ3C011PT1203 | Bedding works for HDPE Pipline 400 mm - (RD-C-1 /1)-Z3-C011-PT |  | 2027-07-12 → 2027-07-13 (+1d) | -167d → -168d |
| RHD4CZ3C011PT1303 | Installing for HDPE Pipline 400 mm - (RD-C-1 /1)-Z3-C011-PT |  | 2027-07-18 → 2027-07-19 (+1d) | -169d → -170d |
| RHD4CZ3C011PT1403 | Primary Test for HDPE Pipline 400 mm - (RD-C-1 /1)-Z3-C011-PT | 2027-07-19 → 2027-07-20 (+1d) | 2027-07-20 → 2027-07-21 (+1d) | -169d → -170d |
| RHD4CZ3C011PT1503 | Backfilling and warning tape works for HDPE Pipline 400 mm - (RD-C-1 /1)-Z3-C011-PT | 2027-07-21 → 2027-07-22 (+1d) | 2027-07-24 → 2027-07-25 (+1d) | -169d → -170d |
| 1747 | **RHD4-02-002-C011-(PT)-Butterfly Valve Chamber** | 2027-07-06 → 2027-07-07 (+1d) | 2027-07-14 → 2027-07-15 (+1d) |  |
| RHD4CZ3C011PT2100 | Excavation and Bedding for Butterfly Valve Chamber for Potable Water Network - (RD-C-1 /1)-Z3-C011-PT | 2027-07-06 → 2027-07-07 (+1d) | 2027-07-07 → 2027-07-08 (+1d) | -139d → -140d |
| RHD4CZ3C011PT2200 | PC works for Butterfly Valve Chamber for Potable Water Network - (RD-C-1 /1)-Z3-C011-PT | 2027-07-08 → 2027-07-10 (+2d) | 2027-07-10 → 2027-07-11 (+1d) | -139d → -140d |
| RHD4CZ3C011PT2300 | Installation for Butterfly Valve Chamber for Potable Water Network - (RD-C-1 /1)-Z3-C011-PT | 2027-07-11 → 2027-07-12 (+1d) | 2027-07-12 → 2027-07-13 (+1d) | -139d → -140d |
| RHD4CZ3C011PT2400 | Backfilling works for Butterfly Valve Chamber for Potable Water Network - (RD-C-1 /1)-Z3-C011-PT | 2027-07-13 → 2027-07-14 (+1d) | 2027-07-14 → 2027-07-15 (+1d) | -139d → -140d |
| 1748 | **RHD4-02-002-C011-(PT)-Butterfly Valves** | 2027-07-13 → 2027-07-14 (+1d) | 2027-07-17 → 2027-07-18 (+1d) |  |
| RHD4CZ3C011PT3101 | Installation for Butterfly Valves for Potable Water Network - (RD-C-1 /1)-Z3-C011-PT | 2027-07-13 → 2027-07-14 (+1d) | 2027-07-14 → 2027-07-15 (+1d) | -139d → -140d |
| RHD4CZ3C011PT3201 | Stem and Service box for Butterfly Valves for Potable Water Network - (RD-C-1 /1)-Z3-C011-PT | 2027-07-15 → 2027-07-17 (+2d) | 2027-07-17 → 2027-07-18 (+1d) | -139d → -140d |
| 1749 | **RHD4-02-002-C011-(PT)-Wash out Valve Chambers** | 2027-07-06 → 2027-07-07 (+1d) | 2027-07-14 → 2027-07-15 (+1d) |  |
| RHD4CZ3C011PT2101 | Excavation and Bedding for Wash out Valve Chambers for Potable Water Network - (RD-C-1 /1)-Z3-C011-PT | 2027-07-06 → 2027-07-07 (+1d) | 2027-07-07 → 2027-07-08 (+1d) | -139d → -140d |
| RHD4CZ3C011PT2201 | PC works for Wash out Valve Chambers for Potable Water Network - (RD-C-1 /1)-Z3-C011-PT | 2027-07-08 → 2027-07-10 (+2d) | 2027-07-10 → 2027-07-11 (+1d) | -139d → -140d |
| RHD4CZ3C011PT2301 | Installation for Wash out Valve Chambers for Potable Water Network - (RD-C-1 /1)-Z3-C011-PT | 2027-07-11 → 2027-07-12 (+1d) | 2027-07-12 → 2027-07-13 (+1d) | -139d → -140d |
| RHD4CZ3C011PT2401 | Backfilling works for Wash out Valve Chambers for Potable Water Network - (RD-C-1 /1)-Z3-C011-PT | 2027-07-13 → 2027-07-14 (+1d) | 2027-07-14 → 2027-07-15 (+1d) | -139d → -140d |
| 1750 | **RHD4-02-002-C011-(PT)-Wash out Valves** | 2027-07-13 → 2027-07-14 (+1d) | 2027-07-17 → 2027-07-18 (+1d) |  |
| RHD4CZ3C011PT3102 | Installation for Wash out Valves for Potable Water Network - (RD-C-1 /1)-Z3-C011-PT | 2027-07-13 → 2027-07-14 (+1d) | 2027-07-14 → 2027-07-15 (+1d) | -139d → -140d |
| RHD4CZ3C011PT3202 | Stem and Service box for Wash out Valves for Potable Water Network - (RD-C-1 /1)-Z3-C011-PT | 2027-07-15 → 2027-07-17 (+2d) | 2027-07-17 → 2027-07-18 (+1d) | -139d → -140d |
| 1751 | **RHD4-02-002-C011-(PT)-Air Valve Chambers** | 2027-07-06 → 2027-07-07 (+1d) | 2027-07-14 → 2027-07-15 (+1d) |  |
| RHD4CZ3C011PT2102 | Excavation and Bedding for Air Valve Chambers for Potable Water Network - (RD-C-1 /1)-Z3-C011-PT | 2027-07-06 → 2027-07-07 (+1d) | 2027-07-07 → 2027-07-08 (+1d) | -161d → -162d |
| RHD4CZ3C011PT2202 | PC works for Air Valve Chambers for Potable Water Network - (RD-C-1 /1)-Z3-C011-PT | 2027-07-08 → 2027-07-10 (+2d) | 2027-07-10 → 2027-07-11 (+1d) | -161d → -162d |
| RHD4CZ3C011PT2302 | Installation for Air Valve Chambers for Potable Water Network - (RD-C-1 /1)-Z3-C011-PT | 2027-07-11 → 2027-07-12 (+1d) | 2027-07-12 → 2027-07-13 (+1d) | -161d → -162d |
| RHD4CZ3C011PT2402 | Backfilling works for Air Valve Chambers for Potable Water Network - (RD-C-1 /1)-Z3-C011-PT | 2027-07-13 → 2027-07-14 (+1d) | 2027-07-14 → 2027-07-15 (+1d) | -161d → -162d |
| 1752 | **RHD4-02-002-C011-(PT)-Air Valves** | 2027-07-13 → 2027-07-14 (+1d) | 2027-07-17 → 2027-07-18 (+1d) |  |
| RHD4CZ3C011PT3103 | Installation for Air Valves for Potable Water Network - (RD-C-1 /1)-Z3-C011-PT | 2027-07-13 → 2027-07-14 (+1d) | 2027-07-14 → 2027-07-15 (+1d) | -161d → -162d |
| RHD4CZ3C011PT3203 | Stem and Service box for Air Valves for Potable Water Network - (RD-C-1 /1)-Z3-C011-PT | 2027-07-15 → 2027-07-17 (+2d) | 2027-07-17 → 2027-07-18 (+1d) | -161d → -162d |
| 1753 | **RHD4-02-002-C011-(PT)-Fire Hydrant** | 2027-07-26 → 2027-07-27 (+1d) | 2027-08-11 → 2027-08-12 (+1d) |  |
| RHD4CZ3C011PT4100 | Excavation and Bedding and Pipe Installation for Fire Hydrant - (RD-C-1 /1)-Z3-C011-PT | 2027-07-26 → 2027-07-27 (+1d) | 2027-07-29 → 2027-07-31 (+2d) | -139d → -140d |
| RHD4CZ3C011PT4200 | Valve Installation for Fire Hydrant - (RD-C-1 /1)-Z3-C011-PT | 2027-07-31 → 2027-08-01 (+1d) | 2027-08-02 → 2027-08-03 (+1d) | -139d → -140d |
| RHD4CZ3C011PT4300 | Stem for Fire Hydrant - (RD-C-1 /1)-Z3-C011-PT | 2027-08-03 → 2027-08-04 (+1d) | 2027-08-05 → 2027-08-07 (+2d) | -139d → -140d |
| RHD4CZ3C011PT4400 | Fire Installation for Fire Hydrant - (RD-C-1 /1)-Z3-C011-PT | 2027-08-07 → 2027-08-08 (+1d) | 2027-08-09 → 2027-08-10 (+1d) | -139d → -140d |
| RHD4CZ3C011PT4500 | Protection Barriers for Fire Hydrant - (RD-C-1 /1)-Z3-C011-PT | 2027-08-10 → 2027-08-11 (+1d) | 2027-08-11 → 2027-08-12 (+1d) | -139d → -140d |
| 1754 | **RHD4-02-002-C011-(PT)-Concrete Encasement** | 2027-07-15 → 2027-07-17 (+2d) | 2027-07-18 → 2027-07-19 (+1d) |  |
| RHD4CZ3C011PT5100 | Pipe Encasement for Potable Pipelines - (RD-C-1 /1)-Z3-C011-PT | 2027-07-15 → 2027-07-17 (+2d) | 2027-07-18 → 2027-07-19 (+1d) | -169d → -170d |
| 1755 | **RHD4-02-002-Z3-C011-Irrigation Network - IRR** |  | 2027-09-26 → 2027-09-27 (+1d) |  |
| 1770 | **RHD4-02-002-C011-(IRR)-Air Valves** | 2027-08-17 → 2027-08-18 (+1d) | 2027-08-21 → 2027-08-22 (+1d) |  |
| RHD4CZ3C011IRR3103 | Installation for Air Valves for Irrigation Network - (RD-C-1 /1)-Z3-C011-IRR | 2027-08-17 → 2027-08-18 (+1d) | 2027-08-18 → 2027-08-19 (+1d) | -169d → -170d |
| RHD4CZ3C011IRR3203 | Stem and Service box for Air Valves for Irrigation Network - (RD-C-1 /1)-Z3-C011-IRR | 2027-08-19 → 2027-08-21 (+2d) | 2027-08-21 → 2027-08-22 (+1d) | -169d → -170d |
| 6107 | **RHD4-02-002-C011-(IRR)-HDPE Pipes - 160 mm diameter** |  | 2027-08-16 → 2027-08-17 (+1d) |  |
| RHD4CZ3C011IRR1100 | Excavation works for HDPE Pipline 160 mm - (RD-C-1 /1)-Z3-C011-IRR |  | 2027-08-07 → 2027-08-08 (+1d) | -169d → -170d |
| RHD4CZ3C011IRR1200 | Bedding works for HDPE Pipline 160 mm - (RD-C-1 /1)-Z3-C011-IRR |  | 2027-08-09 → 2027-08-10 (+1d) | -165d → -166d |

| ID | Task | Start | Finish | Total float |
| --- | --- | --- | --- | --- |
| RHD4CZ3C011IRR1300 | Installing for HDPE Pipline 160 mm - (RD-C-1 /1)-Z3-C011-IRR |  | 2027-08-11 → 2027-08-12 (+1d) | -165d → -166d |
| RHD4CZ3C011IRR1400 | Primary Test for HDPE Pipline 160 mm - (RD-C-1 /1)-Z3-C011-IRR | 2027-08-12 → 2027-08-14 (+2d) | 2027-08-14 → 2027-08-15 (+1d) | -158d → -159d |
| RHD4CZ3C011IRR1500 | Backfilling and warning tape works for HDPE Pipline 160 mm - (RD-C-1 /1)-Z3-C011-IRR | 2027-08-15 → 2027-08-16 (+1d) | 2027-08-16 → 2027-08-17 (+1d) | -158d → -159d |
| 6111 | **RHD4-02-002-C011-(IRR)-HDPE Pipes - 315 mm diameter** |  | 2027-09-15 → 2027-09-16 (+1d) |  |
| RHD4CZ3C011IRR1104 | Excavation works for HDPE Pipline 315 mm - (RD-C-1 /1)-Z3-C011-IRR |  | 2027-08-04 → 2027-08-05 (+1d) | -169d → -170d |
| RHD4CZ3C011IRR1204 | Bedding works for HDPE Pipline 315 mm - (RD-C-1 /1)-Z3-C011-IRR |  | 2027-08-16 → 2027-08-17 (+1d) | -146d → -147d |
| RHD4CZ3C011IRR1304 | Installing for HDPE Pipline 315 mm - (RD-C-1 /1)-Z3-C011-IRR |  | 2027-08-28 → 2027-08-29 (+1d) | -146d → -147d |
| RHD4CZ3C011IRR1404 | Primary Test for HDPE Pipline 315 mm - (RD-C-1 /1)-Z3-C011-IRR | 2027-08-29 → 2027-08-30 (+1d) | 2027-09-04 → 2027-09-05 (+1d) | -146d → -147d |
| RHD4CZ3C011IRR1504 | Backfilling and warning tape works for HDPE Pipline 315 mm - (RD-C-1 /1)-Z3-C011-IRR | 2027-09-05 → 2027-09-06 (+1d) | 2027-09-15 → 2027-09-16 (+1d) | -146d → -147d |
| 6115 | **RHD4-02-002-C011-(IRR)-Gate Valves (Direct Buried)** | 2027-09-16 → 2027-09-18 (+2d) | 2027-09-26 → 2027-09-27 (+1d) |  |
| RHD4CZ3C011IRR3100 | Installation for Direct Buried Gate Valves - (RD-C-1 /1)-Z3-C011-IRR | 2027-09-16 → 2027-09-18 (+2d) | 2027-09-20 → 2027-09-21 (+1d) | -146d → -147d |
| RHD4CZ3C011IRR3200 | Stem and Service box for Direct Buried Gate Valves - (RD-C-1 /1)-Z3-C011-IRR | 2027-09-21 → 2027-09-22 (+1d) | 2027-09-26 → 2027-09-27 (+1d) | -146d → -147d |
| 6116 | **RHD4-02-002-C011-(IRR)-Butterfly Valve Chamber** | 2027-08-17 → 2027-08-18 (+1d) | 2027-08-25 → 2027-08-26 (+1d) |  |
| RHD4CZ3C011IRR2100 | Excavation and Bedding for Butterfly Valve Chamber for Irrigation Network - (RD-C-1 /1)-Z3-C011-IRR | 2027-08-17 → 2027-08-18 (+1d) | 2027-08-18 → 2027-08-19 (+1d) | -158d → -159d |
| RHD4CZ3C011IRR2200 | PC works for Butterfly Valve Chamber for Irrigation Network - (RD-C-1 /1)-Z3-C011-IRR | 2027-08-19 → 2027-08-21 (+2d) | 2027-08-21 → 2027-08-22 (+1d) | -158d → -159d |
| RHD4CZ3C011IRR2300 | Installation for Butterfly Valve Chamber for Irrigation Network - (RD-C-1 /1)-Z3-C011-IRR | 2027-08-22 → 2027-08-23 (+1d) | 2027-08-23 → 2027-08-24 (+1d) | -158d → -159d |
| RHD4CZ3C011IRR2400 | Backfilling works for Butterfly Valve Chamber for Irrigation Network - (RD-C-1 /1)-Z3-C011-IRR | 2027-08-24 → 2027-08-25 (+1d) | 2027-08-25 → 2027-08-26 (+1d) | -158d → -159d |
| 6117 | **RHD4-02-002-C011-(IRR)-Butterfly Valves** | 2027-08-24 → 2027-08-25 (+1d) | 2027-08-28 → 2027-08-29 (+1d) |  |
| RHD4CZ3C011IRR3101 | Installation for Butterfly Valves for Irrigation Network - (RD-C-1 /1)-Z3-C011-IRR | 2027-08-24 → 2027-08-25 (+1d) | 2027-08-25 → 2027-08-26 (+1d) | -158d → -159d |
| RHD4CZ3C011IRR3201 | Stem and Service box for Butterfly Valves for Irrigation Network - (RD-C-1 /1)-Z3-C011-IRR | 2027-08-26 → 2027-08-28 (+2d) | 2027-08-28 → 2027-08-29 (+1d) | -158d → -159d |
| 6685 | **RHD4-02-002-C011-(IRR)-Wash out Chamber** | 2027-08-08 → 2027-08-09 (+1d) | 2027-08-16 → 2027-08-17 (+1d) |  |
| RHD4CZ3C011IRR2101 | Excavation and Bedding for Wash out Chamber for Irrigation Network - (RD-C-1 /1)-Z3-C011-IRR | 2027-08-08 → 2027-08-09 (+1d) | 2027-08-09 → 2027-08-10 (+1d) | -158d → -159d |
| RHD4CZ3C011IRR2201 | PC works for Wash out Chamber for Irrigation Network - (RD-C-1 /1)-Z3-C011-IRR | 2027-08-10 → 2027-08-11 (+1d) | 2027-08-11 → 2027-08-12 (+1d) | -158d → -159d |
| RHD4CZ3C011IRR2301 | Installation for Wash out Chamber for Irrigation Network - (RD-C-1 /1)-Z3-C011-IRR | 2027-08-12 → 2027-08-14 (+2d) | 2027-08-14 → 2027-08-15 (+1d) | -158d → -159d |
| RHD4CZ3C011IRR2401 | Backfilling works for Wash out Chamber for Irrigation Network - (RD-C-1 /1)-Z3-C011-IRR | 2027-08-15 → 2027-08-16 (+1d) | 2027-08-16 → 2027-08-17 (+1d) | -158d → -159d |
| 6686 | **RHD4-02-002-C011-(IRR)-Wash out Valves** | 2027-08-15 → 2027-08-16 (+1d) | 2027-08-18 → 2027-08-19 (+1d) |  |
| RHD4CZ3C011IRR3102 | Installation for Wash out Valve for Irrigation Network - (RD-C-1 /1)-Z3-C011-IRR | 2027-08-15 → 2027-08-16 (+1d) | 2027-08-16 → 2027-08-17 (+1d) | -158d → -159d |
| RHD4CZ3C011IRR3202 | Stem and Service box for Wash out Valve for Irrigation Network - (RD-C-1 /1)-Z3-C011-IRR | 2027-08-17 → 2027-08-18 (+1d) | 2027-08-18 → 2027-08-19 (+1d) | -158d → -159d |
| 1769 | **RHD4-02-002-C011-(IRR)-Air Valve Chamber** | 2027-08-08 → 2027-08-09 (+1d) | 2027-08-16 → 2027-08-17 (+1d) |  |
| RHD4CZ3C011IRR2102 | Excavation and Bedding for Valve Chamber for Irrigation Network - (RD-C-1 /1)-Z3-C011-IRR | 2027-08-08 → 2027-08-09 (+1d) | 2027-08-09 → 2027-08-10 (+1d) | -169d → -170d |
| RHD4CZ3C011IRR2202 | PC works for Valve Chamber for Irrigation Network - (RD-C-1 /1)-Z3-C011-IRR | 2027-08-10 → 2027-08-11 (+1d) | 2027-08-11 → 2027-08-12 (+1d) | -169d → -170d |
| RHD4CZ3C011IRR2302 | Installation for Valve Chamber for Irrigation Network - (RD-C-1 /1)-Z3-C011-IRR | 2027-08-12 → 2027-08-14 (+2d) | 2027-08-14 → 2027-08-15 (+1d) | -169d → -170d |
| RHD4CZ3C011IRR2402 | Backfilling works for Valve Chamber for Irrigation Network - (RD-C-1 /1)-Z3-C011-IRR | 2027-08-15 → 2027-08-16 (+1d) | 2027-08-16 → 2027-08-17 (+1d) | -169d → -170d |
| 1789 | **RHD4-02-002-Z3-C011-Medium Voltage Network - MV** | 2027-01-20 → 2027-01-27 (+7d) | 2027-08-21 → 2027-08-16 (-5d) |  |
| 1790 | **RHD4-02-002-C011-(MV)-Medium Voltage cable trench** | 2027-06-19 → 2027-06-14 (-5d) | 2027-08-03 → 2027-07-29 (-5d) |  |
| RHD4CZ3C011MV1100 | Excavation for Medium Voltage Trench - (RD-C-1 /1)-Z3-C011-MV | 2027-06-19 → 2027-06-14 (-5d) | 2027-07-01 → 2027-06-27 (-4d) | -169d → -165d |
| RHD4CZ3C011MV1200 | Trench Backfilling for Medium Voltage Network - (RD-C-1 /1)-Z3-C011-MV | 2027-07-27 → 2027-07-22 (-5d) | 2027-08-03 → 2027-07-29 (-5d) | -169d → -165d |
| 1791 | **RHD4-02-002-C011-(MV)-Medium Voltage duct banks** | 2027-01-20 → 2027-01-27 (+7d) | 2027-02-02 → 2027-02-09 (+7d) |  |
| RHD4CZ3C011MV2100 | Excavation of Duct Banks for Medium Voltage Network - (RD-C-1 /1)-Z3-C011-MV | 2027-01-20 → 2027-01-27 (+7d) | 2027-01-23 → 2027-01-30 (+7d) | -120d → -124d |
| RHD4CZ3C011MV2200 | Installation of Duct Banks for Medium Voltage Network - (RD-C-1 /1)-Z3-C011-MV | 2027-01-24 → 2027-01-31 (+7d) | 2027-01-27 → 2027-02-03 (+7d) | -120d → -124d |
| RHD4CZ3C011MV2300 | Pouring of Duct Banks for Medium Voltage Network - (RD-C-1 /1)-Z3-C011-MV | 2027-01-28 → 2027-02-04 (+7d) | 2027-01-31 → 2027-02-07 (+7d) | -120d → -124d |
| RHD4CZ3C011MV2400 | Backfilling of Duct Banks for Medium Voltage Network - (RD-C-1 /1)-Z3-C011-MV | 2027-02-01 → 2027-02-08 (+7d) | 2027-02-02 → 2027-02-09 (+7d) | -120d → -124d |
| 1792 | **RHD4-02-002-C011-(MV)-Medium Voltage cables 3Cx 500 mm²** | 2027-07-03 → 2027-06-28 (-5d) | 2027-08-21 → 2027-08-16 (-5d) |  |
| RHD4CZ3C011MV3100 | Installation of Medium Voltage Cables 3Cx 500 mm² - (RD-C-1 /1)-Z3-C011-MV | 2027-07-03 → 2027-06-28 (-5d) | 2027-07-15 → 2027-07-11 (-4d) | -169d → -165d |
| RHD4CZ3C011MV3200 | Joints Installation of Medium Voltage Cables 3Cx 500 mm² - (RD-C-1 /1)-Z3-C011-MV | 2027-07-17 → 2027-07-12 (-5d) | 2027-07-26 → 2027-07-21 (-5d) | -169d → -165d |
| RHD4CZ3C011MV3300 | Testing of Medium Voltage Cables 3Cx 500 mm² - (RD-C-1 /1)-Z3-C011-MV | 2027-08-04 → 2027-07-31 (-4d) | 2027-08-18 → 2027-08-14 (-4d) | -169d → -165d |
| RHD4CZ3C011MV3400 | Termination of Medium Voltage Cables 3Cx 500 mm² - (RD-C-1 /1)-Z3-C011-MV | 2027-08-19 → 2027-08-15 (-4d) | 2027-08-21 → 2027-08-16 (-5d) | -169d → -165d |
| 1793 | **RHD4-02-002-C011-(MV)-Medium Voltage cables 3Cx 50 mm²** | 2027-07-03 → 2027-06-28 (-5d) | 2027-08-12 → 2027-08-08 (-4d) |  |
| RHD4CZ3C011MV3101 | Installation of Medium Voltage Cables 3Cx 50 mm² - (RD-C-1 /1)-Z3-C011-MV | 2027-07-03 → 2027-06-28 (-5d) | 2027-07-04 → 2027-06-29 (-5d) | -150d → -146d |
| RHD4CZ3C011MV3301 | Testing of Medium Voltage Cables 3Cx 50 mm² - (RD-C-1 /1)-Z3-C011-MV | 2027-08-04 → 2027-07-31 (-4d) | 2027-08-05 → 2027-08-01 (-4d) | -156d → -152d |
| RHD4CZ3C011MV3401 | Termination of Medium Voltage Cables 3Cx 50 mm² - (RD-C-1 /1)-Z3-C011-MV | 2027-08-11 → 2027-08-07 (-4d) | 2027-08-12 → 2027-08-08 (-4d) | -160d → -156d |
| 1794 | **RHD4-02-002-C011-(MV)-Normally open Point (Outdoor Type)** | 2027-07-14 → 2027-07-10 (-4d) | 2027-07-18 → 2027-07-13 (-5d) |  |
| RHD4CZ3C011MV4100 | Installation for Normally open Point - (RD-C-1 /1)-Z3-C011-MV | 2027-07-14 → 2027-07-10 (-4d) | 2027-07-15 → 2027-07-11 (-4d) | -155d → -151d |
| RHD4CZ3C011MV4200 | Termination for Normally open Point - (RD-C-1 /1)-Z3-C011-MV | 2027-07-17 → 2027-07-12 (-5d) | 2027-07-18 → 2027-07-13 (-5d) | -155d → -151d |
| 1795 | **RHD4-02-002-C011-(MV)-Unit Substations** | 2027-07-27 → 2027-07-22 (-5d) | 2027-08-10 → 2027-08-05 (-5d) |  |
| RHD4CZ3C011MV5100 | Excavation for Unit Substations for Medium Voltage Network - (RD-C-1 /1)-Z3-C011-MV | 2027-07-27 → 2027-07-22 (-5d) | 2027-07-28 → 2027-07-24 (-4d) | -162d → -158d |
| RHD4CZ3C011MV5200 | Concrete Base Placement for Unit Substations for Medium Voltage Network - (RD-C-1 /1)-Z3-C011-MV | 2027-07-29 → 2027-07-25 (-4d) | 2027-07-31 → 2027-07-26 (-5d) | -162d → -158d |
| RHD4CZ3C011MV5300 | Installation for Fences and doors for Medium Voltage Network - (RD-C-1 /1)-Z3-C011-MV | 2027-08-01 → 2027-07-27 (-5d) | 2027-08-05 → 2027-08-01 (-4d) | -162d → -158d |
| RHD4CZ3C011MV5400 | Installation for Unit Substations for Medium Voltage Network - (RD-C-1 /1)-Z3-C011-MV | 2027-08-07 → 2027-08-02 (-5d) | 2027-08-10 → 2027-08-05 (-5d) | -162d → -158d |
| 1796 | **RHD4-02-002-Z3-C011-Low Voltage Network - LV** | 2027-07-18 → 2027-07-19 (+1d) | 2027-08-19 → 2027-08-17 (-2d) |  |
| 1797 | **RHD4-02-002-C011-(LV)-Low Voltage duct banks** | 2027-07-18 → 2027-07-19 (+1d) | 2027-07-31 → 2027-08-01 (+1d) |  |
| RHD4CZ3C011LV2100 | Excavation of Duct Banks for Low Voltage Network - (RD-C-1 /1)-Z3-C011-LV | 2027-07-18 → 2027-07-19 (+1d) | 2027-07-20 → 2027-07-21 (+1d) | -161d → -162d |
| RHD4CZ3C011LV2200 | Installation of Duct Banks for Low Voltage Network - (RD-C-1 /1)-Z3-C011-LV | 2027-07-21 → 2027-07-22 (+1d) | 2027-07-25 → 2027-07-26 (+1d) | -161d → -162d |
| RHD4CZ3C011LV2300 | Pouring of Duct Banks for Low Voltage Network - (RD-C-1 /1)-Z3-C011-LV | 2027-07-26 → 2027-07-27 (+1d) | 2027-07-28 → 2027-07-29 (+1d) | -161d → -162d |
| RHD4CZ3C011LV2400 | Backfilling of Duct Banks for Low Voltage Network - (RD-C-1 /1)-Z3-C011-LV | 2027-07-29 → 2027-07-31 (+2d) | 2027-07-31 → 2027-08-01 (+1d) | -161d → -162d |
| 1799 | **RHD4-02-002-C011-(LV)-Low Voltage cables** | 2027-08-04 → 2027-08-02 (-2d) | 2027-08-12 → 2027-08-10 (-2d) |  |
| RHD4CZ3C011LV3100 | Excavation for Low Voltage Cables for Low Voltage Network - (RD-C-1 /1)-Z3-C011-LV | 2027-08-04 → 2027-08-02 (-2d) | 2027-08-05 → 2027-08-03 (-2d) | -164d → -162d |
| RHD4CZ3C011LV3200 | Cable Laying of Low Voltage Cables for Low Voltage Network - (RD-C-1 /1)-Z3-C011-LV | 2027-08-07 → 2027-08-04 (-3d) | 2027-08-08 → 2027-08-05 (-3d) | -164d → -162d |
| RHD4CZ3C011LV3300 | Warning tape and Backfill for Low Voltage Cables for Low Voltage Network - (RD-C-1 /1)-Z3-C011-LV | 2027-08-09 → 2027-08-07 (-2d) | 2027-08-10 → 2027-08-08 (-2d) | -164d → -162d |
| RHD4CZ3C011LV3400 | Testing of Low Voltage Cables for Low Voltage Network - (RD-C-1 /1)-Z3-C011-LV | 2027-08-11 → 2027-08-09 (-2d) | 2027-08-12 → 2027-08-10 (-2d) | -164d → -162d |

| ID | Task | Start | Finish | Total float |
| --- | --- | --- | --- | --- |
| 1800 | **RHD4-02-002-C011-(LV)-Low Voltage Distribution Pillars** | 2027-08-14 → 2027-08-11 (-3d) | 2027-08-19 → 2027-08-17 (-2d) |  |
| RHD4CZ3C011LV4100 | Leveling for Distribution Pillars for Low Voltage Network - (RD-C-1 /1)-Z3-C011-LV | 2027-08-14 → 2027-08-11 (-3d) | 2027-08-15 → 2027-08-12 (-3d) | -164d → -162d |
| RHD4CZ3C011LV4200 | Lean Concrete for Distribution Pillars for Low Voltage Network - (RD-C-1 /1)-Z3-C011-LV | 2027-08-16 → 2027-08-14 (-2d) | 2027-08-17 → 2027-08-15 (-2d) | -164d → -162d |
| RHD4CZ3C011LV4300 | Installation of Distribution Pillars for Low Voltage Network - (RD-C-1 /1)-Z3-C011-LV | 2027-08-18 → 2027-08-16 (-2d) | 2027-08-19 → 2027-08-17 (-2d) | -164d → -162d |
| 1802 | **RHD4-02-002-Z3-C011-Street Lighting Network - SL** |  | 2028-01-11 → 2028-01-06 (-5d) |  |
| 1804 | **RHD4-02-002-C011-(SL)-Street Lighting Drawpit** | 2027-08-22 → 2027-08-17 (-5d) | 2027-08-28 → 2027-08-23 (-5d) |  |
| RHD4CZ3C011SL5100 | Excavation of Drawpit size 600x600x900mm for Street Lighting Network - (RD-C-1 /1)-Z3-C011-SL | 2027-08-22 → 2027-08-17 (-5d) | 2027-08-23 → 2027-08-18 (-5d) | -169d → -165d |
| RHD4CZ3C011SL5200 | Installation of Drawpit size 600x600x900mm for Street Lighting Network - (RD-C-1 /1)-Z3-C011-SL | 2027-08-24 → 2027-08-19 (-5d) | 2027-08-28 → 2027-08-23 (-5d) | -169d → -165d |
| 1805 | **RHD4-02-002-C011-(SL)-Street Lighting cables** | 2027-10-17 → 2027-10-12 (-5d) | 2027-12-18 → 2027-12-13 (-5d) |  |
| RHD4CZ3C011SL3100 | Excavation for Street Lighting Cables for Street Lighting Network - (RD-C-1 /1)-Z3-C011-SL | 2027-10-17 → 2027-10-12 (-5d) | 2027-11-01 → 2027-10-27 (-5d) | -198d → -194d |
| RHD4CZ3C011SL3200 | Cable Laying of Street Lighting Cables for Street Lighting Network - (RD-C-1 /1)-Z3-C011-SL | 2027-11-02 → 2027-10-28 (-5d) | 2027-11-15 → 2027-11-10 (-5d) | -177d → -173d |
| RHD4CZ3C011SL3300 | Warning tape and Backfill for Street Lighting Cables for Street Lighting Network - (RD-C-1 /1)-Z3-C011-SL | 2027-11-16 → 2027-11-11 (-5d) | 2027-11-29 → 2027-11-24 (-5d) | -177d → -173d |
| RHD4CZ3C011SL3400 | Testing of Street Lighting Cables for Street Lighting Network - (RD-C-1 /1)-Z3-C011-SL | 2027-12-11 → 2027-12-06 (-5d) | 2027-12-18 → 2027-12-13 (-5d) | -155d → -151d |
| 1806 | **RHD4-02-002-C011-(SL)-Street Lighting Poles** | 2027-08-26 → 2027-08-28 (+2d) | 2028-01-11 → 2028-01-06 (-5d) |  |
| RHD4CZ3C011SL1100 | Excavation for RC Base for Lighting Poles for Street Lighting Network - (RD-C-1 /1)-Z3-C011-SL | 2027-08-26 → 2027-08-28 (+2d) | 2027-09-01 → 2027-09-02 (+1d) | -173d → -174d |
| RHD4CZ3C011SL1200 | Installation for RC Base for Lighting Poles for Street Lighting Network - (RD-C-1 /1)-Z3-C011-SL | 2027-09-02 → 2027-09-04 (+2d) | 2027-09-08 → 2027-09-09 (+1d) | -173d → -174d |
| RHD4CZ3C011SL1300 | Backfill for RC Base for Lighting Poles for Street Lighting Network - (RD-C-1 /1)-Z3-C011-SL | 2027-09-09 → 2027-09-11 (+2d) | 2027-09-15 → 2027-09-16 (+1d) | -173d → -174d |
| RHD4CZ3C011SL1400 | Installation for Lighting Poles for Street Lighting Network - (RD-C-1 /1)-Z3-C011-SL | 2027-12-19 → 2027-12-14 (-5d) | 2027-12-28 → 2027-12-23 (-5d) | -155d → -151d |
| RHD4CZ3C011SL1500 | Luminaire Installation for Lighting Poles for Street Lighting Network - (RD-C-1 /1)-Z3-C011-SL | 2027-12-29 → 2027-12-25 (-4d) | 2028-01-11 → 2028-01-06 (-5d) | -155d → -151d |
| 1807 | **RHD4-02-002-C011-(SL)-Street Lighting Feeder Pillars** | 2027-11-30 → 2027-11-25 (-5d) | 2027-12-30 → 2027-12-26 (-4d) |  |
| RHD4CZ3C011SL4100 | Leveling for Distribution Pillars for Street Lighting Network - (RD-C-1 /1)-Z3-C011-SL | 2027-11-30 → 2027-11-25 (-5d) | 2027-12-01 → 2027-11-27 (-4d) | -177d → -173d |
| RHD4CZ3C011SL4200 | Lean Concrete for Distribution Pillars for Street Lighting Network - (RD-C-1 /1)-Z3-C011-SL | 2027-12-02 → 2027-11-28 (-4d) | 2027-12-04 → 2027-11-29 (-5d) | -177d → -173d |
| RHD4CZ3C011SL4300 | Installation of Distribution Pillars for Street Lighting Network - (RD-C-1 /1)-Z3-C011-SL | 2027-12-29 → 2027-12-25 (-4d) | 2027-12-30 → 2027-12-26 (-4d) | -154d → -150d |
| 1808 | **RHD4-02-002-C011-(SL)-Street Lighting Earthing System** | 2028-01-01 → 2027-12-27 (-5d) | 2028-01-02 → 2027-12-28 (-5d) |  |
| RHD4CZ3C011SL6100 | Installation of Earthing for Lighting Poles and Fedder Pillers for Street Lighting Network - (RD-C-1 /1)-Z3-C011-SL | 2028-01-01 → 2027-12-27 (-5d) | 2028-01-02 → 2027-12-28 (-5d) | -154d → -150d |
| 1814 | **RHD4-02-002-Z3-C011-Telecommunications Network - TC** |  | 2028-06-25 → 2028-06-21 (-4d) |  |
| 1815 | **RHD4-02-002-C011-(TC)-Telecommunications Ducts** |  | 2028-06-25 → 2028-06-21 (-4d) |  |
| RHD4CZ3C011TC2100 | Excavation of HDPE Ducts for Telecom Network - (RD-C-1 /1)-Z3-C011-TC |  | 2028-04-22 → 2028-04-18 (-4d) | -177.02d → -175d |
| RHD4CZ3C011TC2200 | Installation of HDPE Ducts for Telecom Network - (RD-C-1 /1)-Z3-C011-TC |  | 2028-04-25 → 2028-04-22 (-3d) | -129.02d → -127d |
| RHD4CZ3C011TC2400 | Backfilling of HDPE Ducts for Telecom Network - (RD-C-1 /1)-Z3-C011-TC |  | 2028-06-25 → 2028-06-21 (-4d) | -170d → -167d |
| 1816 | **RHD4-02-002-C011-(TC)-Telecommunications Manholes** | 2028-04-22 → 2028-04-19 (-3d) | 2028-05-13 → 2028-05-09 (-4d) |  |
| RHD4CZ3C011TC5100 | Excavation for Manholes for Telecom Network - (RD-C-1 /1)-Z3-C011-TC | 2028-04-22 → 2028-04-19 (-3d) | 2028-04-29 → 2028-04-25 (-4d) | -135.02d → -133d |
| RHD4CZ3C011TC5200 | Installation of Manholes for Telecom Network - (RD-C-1 /1)-Z3-C011-TC | 2028-04-29 → 2028-04-26 (-3d) | 2028-05-13 → 2028-05-09 (-4d) | -135.02d → -133d |
| 1818 | **RHD4-02-002-Z3-C011-Information and Communication Technologies - ICT** |  | 2028-06-29 → 2028-06-26 (-3d) |  |
| 1819 | **RHD4-02-002-C011-(ICT)-Information and Communication Technologies Ducts** | 2028-04-22 → 2028-04-19 (-3d) | 2028-06-29 → 2028-06-26 (-3d) |  |
| RHD4CZ3C011ICT2100 | Excavation of HDPE Ducts for ICT Network - (RD-C-1 /1)-Z3-C011-ICT | 2028-04-22 → 2028-04-19 (-3d) | 2028-05-14 → 2028-05-10 (-4d) | -177.02d → -175d |
| RHD4CZ3C011ICT2200 | Installation of HDPE Ducts for ICT Network - (RD-C-1 /1)-Z3-C011-ICT | 2028-05-14 → 2028-05-11 (-3d) | 2028-06-11 → 2028-06-07 (-4d) | -177.02d → -175d |
| RHD4CZ3C011ICT2400 | Backfilling of HDPE Ducts for ICT Network - (RD-C-1 /1)-Z3-C011-ICT | 2028-06-11 → 2028-06-08 (-3d) | 2028-06-29 → 2028-06-26 (-3d) | -177.02d → -175d |
| 1820 | **RHD4-02-002-C011-(ICT)-Information and Communication Technologies Manholes** | 2028-05-14 → 2028-05-11 (-3d) | 2028-06-11 → 2028-06-07 (-4d) |  |
| RHD4CZ3C011ICT5100 | Excavation for Manholes for ICT Network - (RD-C-1 /1)-Z3-C011-ICT | 2028-05-14 → 2028-05-11 (-3d) | 2028-05-28 → 2028-05-24 (-4d) | -177.02d → -175d |
| RHD4CZ3C011ICT5200 | Installation of Manholes for ICT Network - (RD-C-1 /1)-Z3-C011-ICT | 2028-05-28 → 2028-05-25 (-3d) | 2028-06-11 → 2028-06-07 (-4d) | -177.02d → -175d |
| 1822 | **RHD4-02-002-Z3-C011-Security Network - CCTV** | 2028-02-07 → 2028-02-05 (-2d) | 2028-07-10 → 2028-07-06 (-4d) |  |
| 1823 | **RHD4-02-002-C011-(CCTV)-Civil Works** | 2028-02-07 → 2028-02-05 (-2d) | 2028-02-16 → 2028-02-13 (-3d) |  |
| RHD4CZ3C011CCTV2100 | Civil Works for Security Network - (RD-C-1 /1)-Z3-C011-CCTV | 2028-02-07 → 2028-02-05 (-2d) | 2028-02-16 → 2028-02-13 (-3d) | -134.02d → -132d |
| 4851 | **RHD4-02-002-C011-(CCTV)-CCTV Poles** | 2028-04-03 → 2028-04-02 (-1d) | 2028-06-14 → 2028-06-12 (-2d) |  |
| RHD4CZ3C011CCTV1100 | Excavation for RC Base for CCTV Poles for Security Network - (RD-C-1 /1)-Z3-C011-CCTV | 2028-04-03 → 2028-04-02 (-1d) | 2028-04-05 → 2028-04-03 (-2d) | -115.02d → -114d |
| RHD4CZ3C011CCTV1200 | Installation for RC Base for CCTV Poles for Security Network - (RD-C-1 /1)-Z3-C011-CCTV | 2028-05-22 → 2028-05-20 (-2d) | 2028-05-24 → 2028-05-21 (-3d) | -152.02d → -150d |
| RHD4CZ3C011CCTV1300 | Backfill for RC Base for CCTV Poles for Security Network - (RD-C-1 /1)-Z3-C011-CCTV | 2028-05-24 → 2028-05-22 (-2d) | 2028-05-27 → 2028-05-23 (-4d) | -152.02d → -150d |
| RHD4CZ3C011CCTV1400 | Installation for CCTV Poles for Security Network - (RD-C-1 /1)-Z3-C011-CCTV | 2028-06-07 → 2028-06-05 (-2d) | 2028-06-10 → 2028-06-07 (-3d) | -162.06d → -160.05d |
| RHD4CZ3C011CCTV1500 | Protection post Installation for CCTV Poles for Security Network - (RD-C-1 /1)-Z3-C011-CCTV | 2028-06-10 → 2028-06-07 (-3d) | 2028-06-14 → 2028-06-12 (-2d) | -162.06d → -160.05d |
| 4852 | **RHD4-02-002-C011-(CCTV)-Camera** | 2028-06-13 → 2028-06-11 (-2d) | 2028-06-15 → 2028-06-12 (-3d) |  |
| RHD4CZ3C011CCTV3100 | Installation for Cameras for Security Network - (RD-C-1 /1)-Z3-C011-CCTV | 2028-06-13 → 2028-06-11 (-2d) | 2028-06-15 → 2028-06-12 (-3d) | -163.02d → -161d |
| 4853 | **RHD4-02-002-C011-(CCTV)-Power and Infrastructure** | 2028-06-11 → 2028-06-08 (-3d) | 2028-07-02 → 2028-06-28 (-4d) |  |
| RHD4CZ3C011CCTV4100 | Installation of Power outlet, UPS and midspan for PTZ Camerafor Cameras for Security Network - (RD-C-1 /1)-Z3-C011-CCTV | 2028-06-11 → 2028-06-08 (-3d) | 2028-06-13 → 2028-06-10 (-3d) | -163.02d → -161d |
| RHD4CZ3C011CCTV4200 | Short Range Wireless PoP wireless Bridgefor CCTV Poles for Security Network - (RD-C-8 /3)-Z3-C083-CCTV | 2028-06-29 → 2028-06-27 (-2d) | 2028-07-02 → 2028-06-28 (-4d) | -177.02d → -175d |
| 4855 | **RHD4-02-002-C011-(CCTV)-CCTV Panels and Components** | 2028-07-02 → 2028-06-29 (-3d) | 2028-07-10 → 2028-07-06 (-4d) |  |
| RHD4CZ3C011CCTV6100 | Installation for CCTV Panels for Security Network - (RD-C-1 /1)-Z3-C011-CCTV | 2028-07-02 → 2028-06-29 (-3d) | 2028-07-10 → 2028-07-06 (-4d) | -177.02d → -175d |
| 1839 | **RHD4-02-002-Z3-L122** |  | 2028-10-26 → 2028-10-23 (-3d) |  |
| 2018 | **RHD4-02-002-Z3-L122-Road Works - RD** | 2027-02-23 → 2027-02-11 (-12d) | 2028-10-26 → 2028-10-23 (-3d) |  |
| 2019 | **RHD4-02-002-L122-(RD)-Subgrade** | 2027-02-23 → 2027-02-11 (-12d) | 2027-02-28 → 2027-02-16 (-12d) |  |
| RHD4CZ3L122RD1100 | Supply, lay and compaction subgrade compacted thickness 300 mm for Roads - (RD-L-12/2)-Z3-L122-RD | 2027-02-23 → 2027-02-11 (-12d) | 2027-02-28 → 2027-02-16 (-12d) | -185d → -176d |
| 2020 | **RHD4-02-002-L122-(RD)-Aggregate Base Course** | 2027-03-01 → 2027-02-17 (-12d) | 2027-03-06 → 2027-02-23 (-11d) |  |
| RHD4CZ3L122RD2100 | Supply, lay and compaction Aggregate base course compacted thickness 300 mmfor Roads - (RD-L-12/2)-Z3-L122-RD | 2027-03-01 → 2027-02-17 (-12d) | 2027-03-06 → 2027-02-23 (-11d) | -185d → -176d |
| 2021 | **RHD4-02-002-L122-(RD)-Bituminous base course Two Layers, including (MC1)&(RC2)** | 2027-03-07 → 2027-03-01 (-6d) | 2028-08-22 → 2028-08-19 (-3d) |  |
| RHD4CZ3L122RD3100 | Supply, lay and Asphaltic base course including Prime Coat (MC1) for 1st Layer - (RD-L-12/2)-Z3-L122-RD | 2027-03-07 → 2027-03-01 (-6d) | 2027-03-15 → 2027-03-06 (-9d) | -185d → -180d |
| RHD4CZ3L122RD3200 | Supply, lay and Asphaltic base course including Tack Coat (RC2) for 2nd Layer - (RD-L-12/2)-Z3-L122-RD | 2028-08-17 → 2028-08-14 (-3d) | 2028-08-22 → 2028-08-19 (-3d) | -198d → -195d |
| 2023 | **RHD4-02-002-L122-(RD)-Precast Concrete Curb** | 2028-08-23 → 2028-08-20 (-3d) | 2028-08-31 → 2028-08-28 (-3d) |  |
| RHD4CZ3L122RD5100 | Supply and installation Precast Concrete Kerb for Roads - (RD-L-12/2)-Z3-L122-RD | 2028-08-23 → 2028-08-20 (-3d) | 2028-08-31 → 2028-08-28 (-3d) | -198d → -195d |
| 2026 | **RHD4-02-002-L122-(RD)-Traffic Signage** | 2028-09-02 → 2028-08-29 (-4d) | 2028-09-09 → 2028-09-05 (-4d) |  |
| RHD4CZ3L122RD8100 | Installation of Traffic Signage for Road Network - (RD-L-12/2)-Z3-L122-RD | 2028-09-02 → 2028-08-29 (-4d) | 2028-09-09 → 2028-09-05 (-4d) | -198d → -195d |

| ID | Task | Start | Finish | Complete | Total float |
| --- | --- | --- | --- | --- | --- |
| 2024 | **RHD4-02-002-L122-(RD)-Precast Interlocking Block Pavers** | 2028-09-10 → 2028-09-06 (-4d) | 2028-10-03 → 2028-09-30 (-3d) |  |  |
| RHD4CZ3L122RD6100 | Interlocking block pavers for sidewalk-footpath for Side walks and Parking areas - (RD-L-12/2)-Z3-L122-RD | 2028-09-10 → 2028-09-06 (-4d) | 2028-10-03 → 2028-09-30 (-3d) |  | -198d → -195d |
| 2022 | **RHD4-02-002-L122-(RD)-Bituminous concrete wearing course including tack coat (RC2)** | 2028-10-04 → 2028-10-01 (-3d) | 2028-10-12 → 2028-10-09 (-3d) |  |  |
| RHD4CZ3L122RD4100 | Supply, lay and compaction Asphaltic wearing course including tack Coat (RC2)for Road Network - (RD-L-12/2)-Z3-L122-RD | 2028-10-04 → 2028-10-01 (-3d) | 2028-10-12 → 2028-10-09 (-3d) |  | -198d → -195d |
| 2025 | **RHD4-02-002-L122-(RD)-Pavement Marking** | 2028-10-14 → 2028-10-10 (-4d) | 2028-10-26 → 2028-10-23 (-3d) |  |  |
| RHD4CZ3L122RD7100 | Pavement Markings for Road Network - (RD-L-12/2)-Z3-L122-RD | 2028-10-14 → 2028-10-10 (-4d) | 2028-10-26 → 2028-10-23 (-3d) |  | -198d → -195d |
| 1843 | **RHD4-02-002-Z3-L122-Storm Network - ST** |  | 2027-06-08 → 2027-06-09 (+1d) |  |  |
| 3743 | **RHD4-02-002-L122-(ST)-GRP Pipes - 1100 mm diameter** |  | 2027-01-25 → 2027-01-27 (+2d) |  |  |
| RHD4CZ3L122ST1307 | Installing for GRP Pipe Line 1100 mm - (RD-L-12 /2)-Z3-L122-ST | 2027-01-19 → 2026-11-07 A (-73d) | 2027-01-20 → 2026-11-08 A (-73d) | 0% → 100% | -177d → none |
| RHD4CZ3L122ST1207 | Bedding works for GRP Pipe Line 1100 mm - (RD-L-12 /2)-Z3-L122-ST | 2027-01-17 → 2026-11-08 A (-70d) | 2027-01-18 → 2026-11-10 A (-69d) | 0% → 100% | -177d → none |
| RHD4CZ3L122ST1407 | Primary Test for GRP Pipe Line 1100 mm - (RD-L-12 /2)-Z3-L122-ST | 2027-01-21 → 2027-01-24 (+3d) | 2027-01-23 → 2027-01-25 (+2d) |  | -177d → -179d |
| RHD4CZ3L122ST1507 | Backfilling and warning tape works for GRP Pipe Line 1100 mm - (RD-L-12 /2)-Z3-L122-ST | 2027-01-24 → 2027-01-26 (+2d) | 2027-01-25 → 2027-01-27 (+2d) |  | -177d → -179d |
| 2039 | **RHD4-02-002-L122-(ST)-GRP Pipes - 1000 mm diameter** |  | 2027-01-10 → 2027-01-12 (+2d) |  |  |
| RHD4CZ3L122ST1206 | Bedding works for GRP Pipe Line 1000 mm - (RD-L-12 /2)-Z3-L122-ST |  | 2027-01-03 → 2026-11-12 A (-52d) | 0% → 100% | -166d → none |
| RHD4CZ3L122ST1306 | Installing for GRP Pipe Line 1000 mm - (RD-L-12 /2)-Z3-L122-ST |  | 2027-01-05 → 2026-11-10 A (-56d) |  | -166d → none |
| RHD4CZ3L122ST1406 | Primary Test for GRP Pipe Line 1000 mm - (RD-L-12 /2)-Z3-L122-ST | 2027-01-06 → 2027-01-09 (+3d) | 2027-01-07 → 2027-01-10 (+3d) |  | -166d → -168d |
| RHD4CZ3L122ST1506 | Backfilling and warning tape works for GRP Pipe Line 1000 mm - (RD-L-12 /2)-Z3-L122-ST | 2027-01-09 → 2027-01-11 (+2d) | 2027-01-10 → 2027-01-12 (+2d) |  | -166d → -168d |
| 5252 | **RHD4-02-002-L122-(ST)-GRP Pipes - 700 mm diameter** |  | 2027-01-13 → 2027-01-20 (+7d) |  |  |
| RHD4CZ3L122ST1103 | Excavation works for GRP Pipe Line 700 mm - (RD-L-12 /2)-Z3-L122-ST |  | 2027-01-04 → 2027-01-11 (+7d) |  | -177d → -179d |
| RHD4CZ3L122ST1203 | Bedding works for GRP Pipe Line 700 mm - (RD-L-12 /2)-Z3-L122-ST |  | 2027-01-06 → 2027-01-13 (+7d) |  | -177d → -179d |
| RHD4CZ3L122ST1303 | Installing for GRP Pipe Line 700 mm - (RD-L-12 /2)-Z3-L122-ST |  | 2027-01-09 → 2027-01-16 (+7d) |  | -177d → -179d |
| RHD4CZ3L122ST1403 | Primary Test for GRP Pipe Line 700 mm - (RD-L-12 /2)-Z3-L122-ST | 2027-01-10 → 2027-01-17 (+7d) | 2027-01-11 → 2027-01-18 (+7d) |  | -177d → -179d |
| RHD4CZ3L122ST1503 | Backfilling and warning tape works for GRP Pipe Line 700 mm - (RD-L-12 /2)-Z3-L122-ST | 2027-01-12 → 2027-01-19 (+7d) | 2027-01-13 → 2027-01-20 (+7d) |  | -177d → -179d |
| 5250 | **RHD4-02-002-L122-(ST)-GRP Pipes - 500 mm diameter** |  | 2027-01-16 → 2027-01-23 (+7d) |  |  |
| RHD4CZ3L122ST1101 | Excavation works for GRP Pipe Line 500 mm - (RD-L-12 /2)-Z3-L122-ST |  | 2027-01-06 → 2027-01-13 (+7d) |  | -177d → -179d |
| RHD4CZ3L122ST1201 | Bedding works for GRP Pipe Line 500 mm - (RD-L-12 /2)-Z3-L122-ST | 2027-01-07 → 2027-01-14 (+7d) | 2027-01-09 → 2027-01-16 (+7d) |  | -177d → -179d |
| RHD4CZ3L122ST1301 | Installing for GRP Pipe Line 500 mm - (RD-L-12 /2)-Z3-L122-ST | 2027-01-10 → 2027-01-17 (+7d) | 2027-01-11 → 2027-01-18 (+7d) |  | -177d → -179d |
| RHD4CZ3L122ST1401 | Primary Test for GRP Pipe Line 500 mm - (RD-L-12 /2)-Z3-L122-ST | 2027-01-12 → 2027-01-19 (+7d) | 2027-01-13 → 2027-01-20 (+7d) |  | -177d → -179d |
| RHD4CZ3L122ST1501 | Backfilling and warning tape works for GRP Pipe Line 500 mm - (RD-L-12 /2)-Z3-L122-ST | 2027-01-14 → 2027-01-21 (+7d) | 2027-01-16 → 2027-01-23 (+7d) |  | -177d → -179d |
| RHD4CZ3L122ST3202 | Installation of Base for MH 2000 mm - (RD-L-12/2)-Z3-L122-ST | 2027-02-10 → 2026-11-12 A (-90d) |  | 0% → 77% | -154.02d → -155d |
| RHD4CZ3L122ST3302 | MH Ring and C.Slab works and Backfilling works for MH 2000 mm - (RD-L-12/2)-Z3-L122-ST | 2027-02-14 → 2027-02-15 (+1d) |  |  | -154.02d → -155d |
| RHD4CZ3L122ST3402 | Steel Cover for MH 2000 mm - (RD-L-12/2)-Z3-L122-ST | 2027-02-20 → 2027-02-21 (+1d) |  |  | -154.02d → -155d |
| RHD4CZ3L122ST3502 | Finishing, Benching, Testing works for MH 2000 mm - (RD-L-12/2)-Z3-L122-ST | 2027-02-23 → 2027-02-24 (+1d) |  |  | -154.02d → -155d |
| 1861 | **RHD4-02-002-L122-(ST)-MH Works - 1500 mm diameter** |  | 2027-06-05 → 2027-06-06 (+1d) |  |  |
| RHD4CZ3L122ST3101 | Excavation and PC Blinding works for MH 1500 mm - (RD-L-12/2)-Z3-L122-ST |  | 2027-04-20 → 2027-04-21 (+1d) | 78% → 67% | -177d → -176d |
| RHD4CZ3L122ST3201 | Installation of Base for MH 1500 mm - (RD-L-12/2)-Z3-L122-ST | 2027-04-24 → 2026-11-12 A (-163d) | 2027-04-28 → 2027-04-29 (+1d) | 0% → 67% | -179d → -178d |
| RHD4CZ3L122ST3301 | MH Ring and C.Slab works and Backfilling works for MH 1500 mm - (RD-L-12/2)-Z3-L122-ST | 2027-04-29 → 2027-05-01 (+2d) | 2027-05-04 → 2027-05-05 (+1d) |  | -179d → -178d |
| RHD4CZ3L122ST3401 | Steel Cover for MH 1500 mm - (RD-L-12/2)-Z3-L122-ST | 2027-05-05 → 2027-05-06 (+1d) | 2027-05-08 → 2027-05-09 (+1d) |  | -158d → -159d |
| RHD4CZ3L122ST3501 | Finishing, Benching, Testing works for MH 1500 mm - (RD-L-12/2)-Z3-L122-ST | 2027-05-31 → 2027-06-01 (+1d) | 2027-06-05 → 2027-06-06 (+1d) |  | -173d → -174d |
| 1860 | **RHD4-02-002-L122-(ST)-MH Works - 1200 mm diameter** |  | 2027-06-08 → 2027-06-09 (+1d) |  |  |
| RHD4CZ3L122ST3100 | Excavation and PC Blinding works for MH 1200 mm - (RD-L-12/2)-Z3-L122-ST |  | 2027-04-26 → 2027-04-27 (+1d) |  | -171d → -172d |
| RHD4CZ3L122ST3200 | Installation of Base for MH 1200 mm - (RD-L-12/2)-Z3-L122-ST | 2027-04-29 → 2026-11-07 A (-173d) | 2027-05-04 → 2027-05-05 (+1d) | 0% → 37% | -173d → -174d |
| RHD4CZ3L122ST3300 | MH Ring and C.Slab works and Backfilling works for MH 1200 mm - (RD-L-12/2)-Z3-L122-ST | 2027-05-05 → 2027-05-06 (+1d) | 2027-05-08 → 2027-05-09 (+1d) |  | -173d → -174d |
| RHD4CZ3L122ST3400 | Steel Cover for MH 1200 mm - (RD-L-12/2)-Z3-L122-ST | 2027-05-31 → 2027-06-01 (+1d) | 2027-06-02 → 2027-06-03 (+1d) |  | -171d → -172d |
| RHD4CZ3L122ST3500 | Finishing, Benching, Testing works for MH 1200 mm - (RD-L-12/2)-Z3-L122-ST | 2027-06-06 → 2027-06-07 (+1d) | 2027-06-08 → 2027-06-09 (+1d) |  | -173d → -174d |
| 1848 | **RHD4-02-002-L122-(ST)-GRP Pipes - 800 mm diameter** |  | 2027-01-21 → 2027-01-24 (+3d) |  |  |
| RHD4CZ3L122ST1104 | Excavation works for GRP Pipe Line 800 mm - (RD-L-12/2)-Z3-L122-ST |  | 2027-01-12 → 2027-01-14 (+2d) | 25% → 14% | -133d → -140d |
| RHD4CZ3L122ST1304 | Installing for GRP Pipe Line 800 mm - (RD-L-12/2)-Z3-L122-ST | 2027-01-16 → 2026-11-07 A (-70d) | 2027-01-17 → 2027-01-19 (+2d) | 0% → 14% | -133d → -135d |
| RHD4CZ3L122ST1204 | Bedding works for GRP Pipe Line 800 mm - (RD-L-12/2)-Z3-L122-ST | 2027-01-13 → 2026-11-12 A (-62d) | 2027-01-14 → 2027-01-17 (+3d) | 0% → 14% | -133d → -135d |
| RHD4CZ3L122ST1404 | Primary Test for GRP Pipe Line 800 mm - (RD-L-12/2)-Z3-L122-ST | 2027-01-18 → 2027-01-20 (+2d) | 2027-01-19 → 2027-01-21 (+2d) |  | -132d → -134d |
| RHD4CZ3L122ST1504 | Backfilling and warning tape works for GRP Pipe Line 800 mm - (RD-L-12/2)-Z3-L122-ST | 2027-01-20 → 2027-01-23 (+3d) | 2027-01-21 → 2027-01-24 (+3d) |  | -132d → -134d |
| 1844 | **RHD4-02-002-L122-(ST)-GRP Pipes - 400 mm diameter** |  | 2027-01-25 → 2027-02-02 (+8d) |  |  |
| RHD4CZ3L122ST1100 | Excavation works for GRP Pipe Line 400 mm - (RD-L-12/2)-Z3-L122-ST |  | 2027-01-14 → 2027-01-23 (+9d) |  | -133d → -140d |
| RHD4CZ3L122ST1200 | Bedding works for GRP Pipe Line 400 mm - (RD-L-12/2)-Z3-L122-ST |  | 2027-01-17 → 2027-01-25 (+8d) |  | -133d → -140d |
| RHD4CZ3L122ST1300 | Installing for GRP Pipe Line 400 mm - (RD-L-12/2)-Z3-L122-ST |  | 2027-01-20 → 2027-01-28 (+8d) | 78% → 81% | -133d → -140d |
| RHD4CZ3L122ST1500 | Backfilling and warning tape works for GRP Pipe Line 400 mm - (RD-L-12/2)-Z3-L122-ST | 2027-01-24 → 2026-11-12 A (-73d) | 2027-01-25 → 2027-02-02 (+8d) | 0% → 76% | -133d → -140d |
| RHD4CZ3L122ST1400 | Primary Test for GRP Pipe Line 400 mm - (RD-L-12/2)-Z3-L122-ST | 2027-01-21 → 2027-01-30 (+9d) | 2027-01-23 → 2027-01-31 (+8d) |  | -133d → -140d |
| 1858 | **RHD4-02-002-L122-(ST)-UPVC Pipes - 300 mm diameter** |  | 2027-05-30 → 2027-05-31 (+1d) |  |  |
| RHD4CZ3L122ST2100 | Excavation works for UPVC Pipe Line 300 mm - (RD-L-12/2)-Z3-L122-ST |  | 2027-05-11 → 2027-05-12 (+1d) |  | -173d → -174d |
| RHD4CZ3L122ST2200 | Bedding works for UPVC Pipe Line 300 mm - (RD-L-12/2)-Z3-L122-ST |  | 2027-05-19 → 2027-05-20 (+1d) | 30% → 80% | -173d → -174d |
| RHD4CZ3L122ST2300 | Installing for UPVC Pipe Line 300 mm - (RD-L-12/2)-Z3-L122-ST |  | 2027-05-23 → 2027-05-24 (+1d) | 29% → 80% | -173d → -174d |
| RHD4CZ3L122ST2500 | Backfilling and warning tape works for UPVC Pipe Line 300 mm - (RD-L-12/2)-Z3-L122-ST | 2027-05-26 → 2026-11-12 A (-195d) | 2027-05-30 → 2027-05-31 (+1d) | 0% → 40% | -173d → -174d |
| RHD4CZ3L122ST2400 | Primary Test for UPVC Pipe Line 300 mm - (RD-L-12/2)-Z3-L122-ST | 2027-05-24 → 2027-05-25 (+1d) | 2027-05-25 → 2027-05-26 (+1d) |  | -173d → -174d |
| 1866 | **RHD4-02-002-L122-(ST)-Concrete Encasement** | 2027-05-20 → 2027-05-22 (+2d) | 2027-05-25 → 2027-05-26 (+1d) |  |  |
| RHD4CZ3L122ST6100 | Pipe Encasement for Storm Pipelines - (RD-L-12/2)-Z3-L122-ST | 2027-05-20 → 2027-05-22 (+2d) | 2027-05-25 → 2027-05-26 (+1d) |  | -173d → -174d |
| 1867 | **RHD4-02-002-Z3-L122-Catch Basin - ST** |  | 2027-06-30 → 2027-07-01 (+1d) |  |  |
| 1868 | **RHD4-02-002-L122-(ST)-Single Catch Basin Works** |  | 2027-06-19 → 2027-06-20 (+1d) |  |  |
| RHD4CZ3L122ST7100 | Excavation works for Single Catch Basin - (RD-L-12/2)-Z3-L122-ST |  | 2027-05-01 → 2027-05-02 (+1d) |  | -179d → -178d |
| RHD4CZ3L122ST7200 | PC Blinding, Installation and Pipe connection for Single Catch Basin - (RD-L-12/2)-Z3-L122-ST | 2027-05-02 → 2026-11-12 A (-171d) | 2027-05-06 → 2027-05-05 (-1d) | 0% → 80% | -179d → -178d |
| RHD4CZ3L122ST7300 | Rings & C.Slab & Final Backfill for Single Catch Basin - (RD-L-12/2)-Z3-L122-ST | 2027-05-08 → 2027-05-06 (-2d) | 2027-05-13 → 2027-05-12 (-1d) |  | -179d → -178d |

| ID | Task | Start | Finish | Total float |
| --- | --- | --- | --- | --- |
| RHD4CZ3L122ST7400 | Steel Cover for Single Catch Basin - (RD-L-12/2)-Z3-L122-ST | 2027-05-19 → 2027-05-13 (-6d) | 2027-05-24 → 2027-05-23 (-1d) | -160d → -159d |
| RHD4CZ3L122ST7500 | Finishing and Insulation works for Single Catch Basin - (RD-L-12/2)-Z3-L122-ST | 2027-06-09 → 2027-06-10 (+1d) | 2027-06-19 → 2027-06-20 (+1d) | -173d → -174d |
| 1869 | **RHD4-02-002-L122-(ST)-Double Catch Basin Works** | 2027-06-20 → 2027-06-21 (+1d) | 2027-06-30 → 2027-07-01 (+1d) |  |
| RHD4CZ3L122ST8100 | Excavation works for Double Catch Basin - (RD-L-12/2)-Z3-L122-ST | 2027-06-20 → 2027-06-21 (+1d) | 2027-06-21 → 2027-06-22 (+1d) | -173d → -174d |
| RHD4CZ3L122ST8200 | PC Blinding, Installation and Pipe connection for Double Catch Basin - (RD-L-12/2)-Z3-L122-ST | 2027-06-22 → 2027-06-23 (+1d) | 2027-06-23 → 2027-06-24 (+1d) | -173d → -174d |
| RHD4CZ3L122ST8300 | Rings & C.Slab & Final Backfillfor Double Catch Basin - (RD-L-12/2)-Z3-L122-ST | 2027-06-24 → 2027-06-26 (+2d) | 2027-06-26 → 2027-06-27 (+1d) | -173d → -174d |
| RHD4CZ3L122ST8400 | Steel Cover for Double Catch Basin - (RD-L-12/2)-Z3-L122-ST | 2027-06-27 → 2027-06-28 (+1d) | 2027-06-28 → 2027-06-29 (+1d) | -173d → -174d |
| RHD4CZ3L122ST8500 | Finishing and Insulation works for Double Catch Basin - (RD-L-12/2)-Z3-L122-ST | 2027-06-29 → 2027-06-30 (+1d) | 2027-06-30 → 2027-07-01 (+1d) | -173d → -174d |
| 4299 | **RHD4-02-002-Z3-L122-Concrete Box Culvert - ST** |  | 2027-07-18 → 2027-07-19 (+1d) |  |
| 4300 | **RHD4-02-002-L122-(ST)-Concrete Box Culvert** |  | 2027-07-18 → 2027-07-19 (+1d) |  |
| RHD4CZ3L122ST4700 | Backfilling works for Box Culvert - (RD-L-12/2)-Z3-L122-ST | 2027-07-08 → 2027-07-10 (+2d) | 2027-07-18 → 2027-07-19 (+1d) | -156d → -157d |
| 4301 | **RHD4-02-002-L122-(ST)-Concrete Chambers** | 2026-09-30 → 2027-07-03 (+276d) | 2027-07-10 → 2027-07-11 (+1d) |  |
| RHD4CZ3L122ST5100 | Excavation and Bedding for Concrete Chambers - for Box Culvert - (RD-L-12/2)-Z3-L122-ST | 2026-09-30 A → 2027-07-03 (+276d) | 2027-07-03 → 2027-07-04 (+1d) | -156d → -157d |
| RHD4CZ3L122ST5200 | PC works for Concrete Chambers - for Box Culvert - (RD-L-12/2)-Z3-L122-ST | 2026-10-03 A → 2027-07-05 (+275d) | 2027-07-05 → 2027-07-06 (+1d) | -156d → -157d |
| RHD4CZ3L122ST5300 | Installation for Concrete Chambers - for Box Culvert - (RD-L-12/2)-Z3-L122-ST | 2026-10-05 A → 2027-07-07 (+275d) | 2027-07-07 → 2027-07-08 (+1d) | -156d → -157d |
| RHD4CZ3L122ST5400 | Backfilling works for Concrete Chambers - for Box Culvert - (RD-L-12/2)-Z3-L122-ST | 2027-07-08 → 2027-07-10 (+2d) | 2027-07-10 → 2027-07-11 (+1d) | -150d → -151d |
| 1892 | **RHD4-02-002-Z3-L122-Sewage Network - SW** |  | 2027-07-20 → 2027-07-21 (+1d) |  |
| 577 | **RHD4-02-002-L122-(SW)-MH Works - 1200 mm diameter** |  | 2027-07-20 → 2027-07-21 (+1d) |  |
| RHD4CZ3L122SW3200 | Installation of Base for MH 1200 mm - (RD-L-12 /2)-Z3-L122-SW | 2027-07-01 → 2027-07-03 (+2d) | 2027-07-03 → 2027-07-04 (+1d) | -147d → -148d |
| RHD4CZ3L122SW3300 | MH Ring and C.Slab works and Backfilling works for MH 1200 mm - (RD-L-12 /2)-Z3-L122-SW | 2027-07-04 → 2027-07-05 (+1d) | 2027-07-05 → 2027-07-06 (+1d) | -147d → -148d |
| RHD4CZ3L122SW3400 | Steel Cover for MH 1200 mm - (RD-L-12 /2)-Z3-L122-SW | 2027-07-06 → 2027-07-07 (+1d) | 2027-07-07 → 2027-07-08 (+1d) | -147d → -148d |
| RHD4CZ3L122SW3500 | Finishing, Benching, Testing works for MH 1200 mm - (RD-L-12 /2)-Z3-L122-SW | 2027-07-19 → 2027-07-20 (+1d) | 2027-07-20 → 2027-07-21 (+1d) | -156d → -157d |
| 573 | **RHD4-02-002-L122-(SW)-UPVC Pipes - 200 mm diameter** |  | 2027-07-10 → 2027-07-11 (+1d) |  |
| RHD4CZ3L122SW2200 | Bedding works for UPVC Pipe Line 200 mm - (RD-L-12 /2)-Z3-L122-SW | 2027-07-01 → 2027-07-03 (+2d) | 2027-07-03 → 2027-07-04 (+1d) | -158d → -159d |
| RHD4CZ3L122SW2300 | Installing for UPVC Pipe Line 200 mm - (RD-L-12 /2)-Z3-L122-SW | 2027-07-04 → 2027-07-05 (+1d) | 2027-07-05 → 2027-07-06 (+1d) | -158d → -159d |
| RHD4CZ3L122SW2400 | Primary Test for UPVC Pipe Line 200 mm - (RD-L-12 /2)-Z3-L122-SW | 2027-07-06 → 2027-07-07 (+1d) | 2027-07-07 → 2027-07-08 (+1d) | -158d → -159d |
| RHD4CZ3L122SW2500 | Backfilling and warning tape works for UPVC Pipe Line 200 mm - (RD-L-12 /2)-Z3-L122-SW | 2027-07-08 → 2027-07-10 (+2d) | 2027-07-10 → 2027-07-11 (+1d) | -158d → -159d |
| 1929 | **RHD4-02-002-Z3-L122-Potable Network - PT** | 2027-07-11 → 2027-07-12 (+1d) | 2027-09-14 → 2027-09-15 (+1d) |  |
| 1933 | **RHD4-02-002-L122-(PT)-HDPE Pipes - 400 mm diameter** | 2027-07-11 → 2027-07-12 (+1d) | 2027-08-24 → 2027-08-25 (+1d) |  |
| RHD4CZ3L122PT1103 | Excavation works for HDPE Pipline 400 mm - (RD-L-12/2)-Z3-L122-PT | 2027-07-11 → 2027-07-12 (+1d) | 2027-07-19 → 2027-07-20 (+1d) | -158d → -159d |
| RHD4CZ3L122PT1203 | Bedding works for HDPE Pipline 400 mm - (RD-L-12/2)-Z3-L122-PT | 2027-07-20 → 2027-07-21 (+1d) | 2027-07-27 → 2027-07-28 (+1d) | -158d → -159d |
| RHD4CZ3L122PT1303 | Installing for HDPE Pipline 400 mm - (RD-L-12/2)-Z3-L122-PT | 2027-07-28 → 2027-07-29 (+1d) | 2027-08-09 → 2027-08-10 (+1d) | -158d → -159d |
| RHD4CZ3L122PT1403 | Primary Test for HDPE Pipline 400 mm - (RD-L-12/2)-Z3-L122-PT | 2027-08-10 → 2027-08-11 (+1d) | 2027-08-15 → 2027-08-16 (+1d) | -158d → -159d |
| RHD4CZ3L122PT1503 | Backfilling and warning tape works for HDPE Pipline 400 mm - (RD-L-12/2)-Z3-L122-PT | 2027-08-16 → 2027-08-17 (+1d) | 2027-08-24 → 2027-08-25 (+1d) | -158d → -159d |
| 1747 | **RHD4-02-002-L122-(PT)-Butterfly Valve Chamber** | 2027-07-20 → 2027-07-21 (+1d) | 2027-07-28 → 2027-07-29 (+1d) |  |
| RHD4CZ3L122PT2100 | Excavation and Bedding for Butterfly Valve Chamber for Potable Water Network - (RD-L-12/2)-Z3-L122-PT | 2027-07-20 → 2027-07-21 (+1d) | 2027-07-21 → 2027-07-22 (+1d) | -146d → -147d |
| RHD4CZ3L122PT2200 | PC works for Butterfly Valve Chamber for Potable Water Network - (RD-L-12/2)-Z3-L122-PT | 2027-07-22 → 2027-07-24 (+2d) | 2027-07-24 → 2027-07-25 (+1d) | -146d → -147d |
| RHD4CZ3L122PT2300 | Installation for Butterfly Valve Chamber for Potable Water Network - (RD-L-12/2)-Z3-L122-PT | 2027-07-25 → 2027-07-26 (+1d) | 2027-07-26 → 2027-07-27 (+1d) | -146d → -147d |
| RHD4CZ3L122PT2400 | Backfilling works for Butterfly Valve Chamber for Potable Water Network - (RD-L-12/2)-Z3-L122-PT | 2027-07-27 → 2027-07-28 (+1d) | 2027-07-28 → 2027-07-29 (+1d) | -146d → -147d |
| 1748 | **RHD4-02-002-L122-(PT)-Butterfly Valves** | 2027-07-27 → 2027-07-28 (+1d) | 2027-07-31 → 2027-08-01 (+1d) |  |
| RHD4CZ3L122PT3101 | Installation for Butterfly Valves for Potable Water Network - (RD-L-12/2)-Z3-L122-PT | 2027-07-27 → 2027-07-28 (+1d) | 2027-07-28 → 2027-07-29 (+1d) | -146d → -147d |
| RHD4CZ3L122PT3201 | Stem and Service box for Butterfly Valves for Potable Water Network - (RD-L-12/2)-Z3-L122-PT | 2027-07-29 → 2027-07-31 (+2d) | 2027-07-31 → 2027-08-01 (+1d) | -146d → -147d |
| 1939 | **RHD4-02-002-L122-(PT)-Wash out Valves** | 2027-09-08 → 2027-09-09 (+1d) | 2027-09-14 → 2027-09-15 (+1d) |  |
| RHD4CZ3L122PT3102 | Installation for Wash out Valves for Potable Water Network - (RD-L-12/2)-Z3-L122-PT | 2027-09-08 → 2027-09-09 (+1d) | 2027-09-09 → 2027-09-11 (+2d) | -156d → -157d |
| RHD4CZ3L122PT3202 | Stem and Service box for Wash out Valves for Potable Water Network - (RD-L-12/2)-Z3-L122-PT | 2027-09-13 → 2027-09-14 (+1d) | 2027-09-14 → 2027-09-15 (+1d) | -158d → -159d |
| 1940 | **RHD4-02-002-L122-(PT)-Air Valve Chambers** | 2027-07-20 → 2027-07-21 (+1d) | 2027-07-28 → 2027-07-29 (+1d) |  |
| RHD4CZ3L122PT2102 | Excavation and Bedding for Air Valve Chambers for Potable Water Network - (RD-L-12/2)-Z3-L122-PT | 2027-07-20 → 2027-07-21 (+1d) | 2027-07-21 → 2027-07-22 (+1d) | -121d → -122d |
| RHD4CZ3L122PT2202 | PC works for Air Valve Chambers for Potable Water Network - (RD-L-12/2)-Z3-L122-PT | 2027-07-22 → 2027-07-24 (+2d) | 2027-07-24 → 2027-07-25 (+1d) | -121d → -122d |
| RHD4CZ3L122PT2302 | Installation for Air Valve Chambers for Potable Water Network - (RD-L-12/2)-Z3-L122-PT | 2027-07-25 → 2027-07-26 (+1d) | 2027-07-26 → 2027-07-27 (+1d) | -121d → -122d |
| RHD4CZ3L122PT2402 | Backfilling works for Air Valve Chambers for Potable Water Network - (RD-L-12/2)-Z3-L122-PT | 2027-07-27 → 2027-07-28 (+1d) | 2027-07-28 → 2027-07-29 (+1d) | -121d → -122d |
| 1941 | **RHD4-02-002-L122-(PT)-Air Valves** | 2027-07-27 → 2027-07-28 (+1d) | 2027-07-31 → 2027-08-01 (+1d) |  |
| RHD4CZ3L122PT3103 | Installation for Air Valves for Potable Water Network - (RD-L-12/2)-Z3-L122-PT | 2027-07-27 → 2027-07-28 (+1d) | 2027-07-28 → 2027-07-29 (+1d) | -121d → -122d |
| RHD4CZ3L122PT3203 | Stem and Service box for Air Valves for Potable Water Network - (RD-L-12/2)-Z3-L122-PT | 2027-07-29 → 2027-07-31 (+2d) | 2027-07-31 → 2027-08-01 (+1d) | -121d → -122d |
| 1942 | **RHD4-02-002-L122-(PT)-Fire Hydrant** | 2027-08-25 → 2027-08-26 (+1d) | 2027-09-05 → 2027-09-06 (+1d) |  |
| RHD4CZ3L122PT4100 | Excavation and Bedding and Pipe Installation for Fire Hydrant - (RD-L-12/2)-Z3-L122-PT | 2027-08-25 → 2027-08-26 (+1d) | 2027-08-26 → 2027-08-28 (+2d) | -150d → -151d |
| RHD4CZ3L122PT4200 | Valve Installation for Fire Hydrant - (RD-L-12/2)-Z3-L122-PT | 2027-08-28 → 2027-08-29 (+1d) | 2027-08-29 → 2027-08-30 (+1d) | -150d → -151d |
| RHD4CZ3L122PT4300 | Stem for Fire Hydrant - (RD-L-12/2)-Z3-L122-PT | 2027-08-30 → 2027-08-31 (+1d) | 2027-08-31 → 2027-09-01 (+1d) | -150d → -151d |
| RHD4CZ3L122PT4400 | Fire Installation for Fire Hydrant - (RD-L-12/2)-Z3-L122-PT | 2027-09-01 → 2027-09-02 (+1d) | 2027-09-02 → 2027-09-04 (+2d) | -150d → -151d |
| RHD4CZ3L122PT4500 | Protection Barriers for Fire Hydrant - (RD-L-12/2)-Z3-L122-PT | 2027-09-04 → 2027-09-05 (+1d) | 2027-09-05 → 2027-09-06 (+1d) | -150d → -151d |
| 1938 | **RHD4-02-002-L122-(PT)-Wash out Valve Chambers** | 2027-08-25 → 2027-08-26 (+1d) | 2027-09-12 → 2027-09-13 (+1d) |  |
| RHD4CZ3L122PT2101 | Excavation and Bedding for Wash out Valve Chambers for Potable Water Network - (RD-L-12/2)-Z3-L122-PT | 2027-08-25 → 2027-08-26 (+1d) | 2027-08-29 → 2027-08-30 (+1d) | -158d → -159d |
| RHD4CZ3L122PT2201 | PC works for Wash out Valve Chambers for Potable Water Network - (RD-L-12/2)-Z3-L122-PT | 2027-08-30 → 2027-08-31 (+1d) | 2027-09-02 → 2027-09-04 (+2d) | -158d → -159d |
| RHD4CZ3L122PT2301 | Installation for Wash out Valve Chambers for Potable Water Network - (RD-L-12/2)-Z3-L122-PT | 2027-09-04 → 2027-09-05 (+1d) | 2027-09-07 → 2027-09-08 (+1d) | -158d → -159d |
| RHD4CZ3L122PT2401 | Backfilling works for Wash out Valve Chambers for Potable Water Network - (RD-L-12/2)-Z3-L122-PT | 2027-09-08 → 2027-09-09 (+1d) | 2027-09-12 → 2027-09-13 (+1d) | -158d → -159d |
| 1944 | **RHD4-02-002-Z3-L122-Irrigation Network - IRR** | 2027-07-20 → 2027-07-21 (+1d) | 2027-10-03 → 2027-10-04 (+1d) |  |
| 1949 | **RHD4-02-002-L122-(IRR)-HDPE Pipes - 315 mm diameter** | 2027-08-16 → 2027-08-17 (+1d) | 2027-10-03 → 2027-10-04 (+1d) |  |
| RHD4CZ3L122IRR1104 | Excavation works for HDPE Pipline 315 mm - (RD-L-12/2)-Z3-L122-IRR | 2027-08-16 → 2027-08-17 (+1d) | 2027-08-26 → 2027-08-28 (+2d) | -157d → -158d |
| RHD4CZ3L122IRR1204 | Bedding works for HDPE Pipline 315 mm - (RD-L-12/2)-Z3-L122-IRR | 2027-08-28 → 2027-08-29 (+1d) | 2027-09-05 → 2027-09-06 (+1d) | -157d → -158d |
| RHD4CZ3L122IRR1304 | Installing for HDPE Pipline 315 mm - (RD-L-12/2)-Z3-L122-IRR | 2027-09-06 → 2027-09-07 (+1d) | 2027-09-16 → 2027-09-18 (+2d) | -157d → -158d |
| RHD4CZ3L122IRR1404 | Primary Test for HDPE Pipline 315 mm - (RD-L-12/2)-Z3-L122-IRR | 2027-09-18 → 2027-09-19 (+1d) | 2027-09-22 → 2027-09-25 (+3d) | -135d → -136d |

| ID | Task | Start | Finish | Total float |
| --- | --- | --- | --- | --- |
| RHD4CZ3L122IRR1504 | Backfilling and warning tape works for HDPE Pipline 315 mm - (RD-L-12/2)-Z3-L122-IRR | 2027-09-25 → 2027-09-26 (+1d) | 2027-10-03 → 2027-10-04 (+1d) | -135d → -136d |
| 1945 | **RHD4-02-002-L122-(IRR)-HDPE Pipes - 160 mm diameter** | 2027-07-20 → 2027-07-21 (+1d) | 2027-09-21 → 2027-09-22 (+1d) |  |
| RHD4CZ3L122IRR1100 | Excavation works for HDPE Pipline 160 mm - (RD-L-12/2)-Z3-L122-IRR | 2027-07-20 → 2027-07-21 (+1d) | 2027-07-21 → 2027-07-22 (+1d) | -157d → -158d |
| RHD4CZ3L122IRR1200 | Bedding works for HDPE Pipline 160 mm - (RD-L-12/2)-Z3-L122-IRR | 2027-07-22 → 2027-07-24 (+2d) | 2027-07-24 → 2027-07-25 (+1d) | -142d → -143d |
| RHD4CZ3L122IRR1300 | Installing for HDPE Pipline 160 mm - (RD-L-12/2)-Z3-L122-IRR | 2027-07-25 → 2027-07-26 (+1d) | 2027-07-26 → 2027-07-27 (+1d) | -142d → -143d |
| RHD4CZ3L122IRR1400 | Primary Test for HDPE Pipline 160 mm - (RD-L-12/2)-Z3-L122-IRR | 2027-09-18 → 2027-09-19 (+1d) | 2027-09-19 → 2027-09-20 (+1d) | -157d → -158d |
| RHD4CZ3L122IRR1500 | Backfilling and warning tape works for HDPE Pipline 160 mm - (RD-L-12/2)-Z3-L122-IRR | 2027-09-20 → 2027-09-21 (+1d) | 2027-09-21 → 2027-09-22 (+1d) | -157d → -158d |
| 1953 | **RHD4-02-002-L122-(IRR)-Gate Valves (Direct Buried)** | 2027-09-14 → 2027-09-15 (+1d) | 2027-09-20 → 2027-09-21 (+1d) |  |
| RHD4CZ3L122IRR3100 | Installation for Direct Buried Gate Valves - (RD-L-12/2)-Z3-L122-IRR | 2027-09-14 → 2027-09-15 (+1d) | 2027-09-16 → 2027-09-18 (+2d) | -157d → -158d |
| RHD4CZ3L122IRR3200 | Stem and Service box for Direct Buried Gate Valves - (RD-L-12/2)-Z3-L122-IRR | 2027-09-18 → 2027-09-19 (+1d) | 2027-09-20 → 2027-09-21 (+1d) | -154d → -155d |
| 1956 | **RHD4-02-002-L122-(IRR)-Wash out Chamber** | 2027-07-22 → 2027-07-24 (+2d) | 2027-07-31 → 2027-08-01 (+1d) |  |
| RHD4CZ3L122IRR2101 | Excavation and Bedding for Wash out Chamber for Irrigation Network - (RD-L-12/2)-Z3-L122-IRR | 2027-07-22 → 2027-07-24 (+2d) | 2027-07-24 → 2027-07-25 (+1d) | -157d → -158d |
| RHD4CZ3L122IRR2201 | PC works for Wash out Chamber for Irrigation Network - (RD-L-12/2)-Z3-L122-IRR | 2027-07-25 → 2027-07-26 (+1d) | 2027-07-26 → 2027-07-27 (+1d) | -157d → -158d |
| RHD4CZ3L122IRR2301 | Installation for Wash out Chamber for Irrigation Network - (RD-L-12/2)-Z3-L122-IRR | 2027-07-27 → 2027-07-28 (+1d) | 2027-07-28 → 2027-07-29 (+1d) | -157d → -158d |
| RHD4CZ3L122IRR2401 | Backfilling works for Wash out Chamber for Irrigation Network - (RD-L-12/2)-Z3-L122-IRR | 2027-07-29 → 2027-07-31 (+2d) | 2027-07-31 → 2027-08-01 (+1d) | -157d → -158d |
| 1957 | **RHD4-02-002-L122-(IRR)-Wash out Valves** | 2027-07-29 → 2027-07-31 (+2d) | 2027-08-02 → 2027-08-03 (+1d) |  |
| RHD4CZ3L122IRR3102 | Installation for Wash out Valve for Irrigation Network - (RD-L-12/2)-Z3-L122-IRR | 2027-07-29 → 2027-07-31 (+2d) | 2027-07-31 → 2027-08-01 (+1d) | -157d → -158d |
| RHD4CZ3L122IRR3202 | Stem and Service box for Wash out Valve for Irrigation Network - (RD-L-12/2)-Z3-L122-IRR | 2027-08-01 → 2027-08-02 (+1d) | 2027-08-02 → 2027-08-03 (+1d) | -157d → -158d |
| 1978 | **RHD4-02-002-Z3-L122-Medium Voltage Network - MV** | 2027-07-19 → 2027-07-14 (-5d) | 2027-11-04 → 2027-10-31 (-4d) |  |
| 1979 | **RHD4-02-002-L122-(MV)-Medium Voltage cable trench** | 2027-07-19 → 2027-07-14 (-5d) | 2027-10-13 → 2027-10-09 (-4d) |  |
| RHD4CZ3L122MV1100 | Excavation for Medium Voltage Trench - (RD-L-12/2)-Z3-L122-MV | 2027-07-19 → 2027-07-14 (-5d) | 2027-08-10 → 2027-08-05 (-5d) | -198d → -194d |
| RHD4CZ3L122MV1200 | Trench Backfilling for Medium Voltage Network - (RD-L-12/2)-Z3-L122-MV | 2027-09-20 → 2027-09-15 (-5d) | 2027-10-13 → 2027-10-09 (-4d) | -198d → -194d |
| 1980 | **RHD4-02-002-L122-(MV)-Medium Voltage duct banks** | 2027-08-11 → 2027-08-07 (-4d) | 2027-08-30 → 2027-08-25 (-5d) |  |
| RHD4CZ3L122MV2100 | Excavation of Duct Banks for Medium Voltage Network - (RD-L-12/2)-Z3-L122-MV | 2027-08-11 → 2027-08-07 (-4d) | 2027-08-15 → 2027-08-10 (-5d) | -148d → -144d |
| RHD4CZ3L122MV2200 | Installation of Duct Banks for Medium Voltage Network - (RD-L-12/2)-Z3-L122-MV | 2027-08-16 → 2027-08-11 (-5d) | 2027-08-22 → 2027-08-17 (-5d) | -148d → -144d |
| RHD4CZ3L122MV2300 | Pouring of Duct Banks for Medium Voltage Network - (RD-L-12/2)-Z3-L122-MV | 2027-08-23 → 2027-08-18 (-5d) | 2027-08-26 → 2027-08-22 (-4d) | -148d → -144d |
| RHD4CZ3L122MV2400 | Backfilling of Duct Banks for Medium Voltage Network - (RD-L-12/2)-Z3-L122-MV | 2027-08-28 → 2027-08-23 (-5d) | 2027-08-30 → 2027-08-25 (-5d) | -148d → -144d |
| 1981 | **RHD4-02-002-L122-(MV)-Medium Voltage cables 3Cx 500 mm²** | 2027-08-11 → 2027-08-07 (-4d) | 2027-11-04 → 2027-10-31 (-4d) |  |
| RHD4CZ3L122MV3100 | Installation of Medium Voltage Cables 3Cx 500 mm² - (RD-L-12/2)-Z3-L122-MV | 2027-08-11 → 2027-08-07 (-4d) | 2027-08-30 → 2027-08-25 (-5d) | -198d → -194d |
| RHD4CZ3L122MV3200 | Joints Installation of Medium Voltage Cables 3Cx 500 mm² - (RD-L-12/2)-Z3-L122-MV | 2027-08-31 → 2027-08-26 (-5d) | 2027-09-19 → 2027-09-14 (-5d) | -198d → -194d |
| RHD4CZ3L122MV3300 | Testing of Medium Voltage Cables 3Cx 500 mm² - (RD-L-12/2)-Z3-L122-MV | 2027-10-14 → 2027-10-10 (-4d) | 2027-11-02 → 2027-10-28 (-5d) | -185d → -181d |
| RHD4CZ3L122MV3400 | Termination of Medium Voltage Cables 3Cx 500 mm² - (RD-L-12/2)-Z3-L122-MV | 2027-11-03 → 2027-10-30 (-4d) | 2027-11-04 → 2027-10-31 (-4d) | -185d → -181d |
| 1982 | **RHD4-02-002-L122-(MV)-Medium Voltage cables 3Cx 50 mm²** | 2027-08-11 → 2027-08-07 (-4d) | 2027-10-21 → 2027-10-17 (-4d) |  |
| RHD4CZ3L122MV3101 | Installation of Medium Voltage Cables 3Cx 50 mm² - (RD-L-12/2)-Z3-L122-MV | 2027-08-11 → 2027-08-07 (-4d) | 2027-08-12 → 2027-08-08 (-4d) | -166d → -162d |
| RHD4CZ3L122MV3301 | Testing of Medium Voltage Cables 3Cx 50 mm² - (RD-L-12/2)-Z3-L122-MV | 2027-10-14 → 2027-10-10 (-4d) | 2027-10-16 → 2027-10-11 (-5d) | -198d → -194d |
| RHD4CZ3L122MV3401 | Termination of Medium Voltage Cables 3Cx 50 mm² - (RD-L-12/2)-Z3-L122-MV | 2027-10-17 → 2027-10-12 (-5d) | 2027-10-21 → 2027-10-17 (-4d) | -173d → -169d |
| 1984 | **RHD4-02-002-L122-(MV)-Unit Substations** | 2027-08-11 → 2027-08-07 (-4d) | 2027-08-25 → 2027-08-21 (-4d) |  |
| RHD4CZ3L122MV5100 | Excavation for Unit Substations for Medium Voltage Network - (RD-L-12/2)-Z3-L122-MV | 2027-08-11 → 2027-08-07 (-4d) | 2027-08-12 → 2027-08-08 (-4d) | -137d → -133d |
| RHD4CZ3L122MV5200 | Concrete Base Placement for Unit Substations for Medium Voltage Network - (RD-L-12/2)-Z3-L122-MV | 2027-08-14 → 2027-08-09 (-5d) | 2027-08-15 → 2027-08-10 (-5d) | -137d → -133d |
| RHD4CZ3L122MV5300 | Installation for Fences and doors for Medium Voltage Network - (RD-L-12/2)-Z3-L122-MV | 2027-08-16 → 2027-08-11 (-5d) | 2027-08-21 → 2027-08-16 (-5d) | -137d → -133d |
| RHD4CZ3L122MV5400 | Installation for Unit Substations for Medium Voltage Network - (RD-L-12/2)-Z3-L122-MV | 2027-08-22 → 2027-08-17 (-5d) | 2027-08-25 → 2027-08-21 (-4d) | -137d → -133d |
| 1985 | **RHD4-02-002-Z3-L122-Low Voltage Network - LV** | 2027-09-13 → 2027-09-14 (+1d) | 2027-12-09 → 2027-12-05 (-4d) |  |
| 1986 | **RHD4-02-002-L122-(LV)-Low Voltage duct banks** | 2027-09-13 → 2027-09-14 (+1d) | 2027-10-03 → 2027-10-04 (+1d) |  |
| RHD4CZ3L122LV2100 | Excavation of Duct Banks for Low Voltage Network - (RD-L-12/2)-Z3-L122-LV | 2027-09-13 → 2027-09-14 (+1d) | 2027-09-14 → 2027-09-15 (+1d) | -157d → -158d |
| RHD4CZ3L122LV2200 | Installation of Duct Banks for Low Voltage Network - (RD-L-12/2)-Z3-L122-LV | 2027-09-15 → 2027-09-16 (+1d) | 2027-09-16 → 2027-09-18 (+2d) | -157d → -158d |
| RHD4CZ3L122LV2300 | Pouring of Duct Banks for Low Voltage Network - (RD-L-12/2)-Z3-L122-LV | 2027-09-18 → 2027-09-19 (+1d) | 2027-09-25 → 2027-09-26 (+1d) | -157d → -158d |
| RHD4CZ3L122LV2400 | Backfilling of Duct Banks for Low Voltage Network - (RD-L-12/2)-Z3-L122-LV | 2027-09-26 → 2027-09-27 (+1d) | 2027-10-03 → 2027-10-04 (+1d) | -157d → -158d |
| 1989 | **RHD4-02-002-L122-(LV)-Low Voltage Distribution Pillars** | 2027-12-01 → 2027-11-27 (-4d) | 2027-12-09 → 2027-12-05 (-4d) |  |
| RHD4CZ3L122LV4100 | Leveling for Distribution Pillars for Low Voltage Network - (RD-L-12/2)-Z3-L122-LV | 2027-12-01 → 2027-11-27 (-4d) | 2027-12-04 → 2027-11-29 (-5d) | -185d → -181d |
| RHD4CZ3L122LV4200 | Lean Concrete for Distribution Pillars for Low Voltage Network - (RD-L-12/2)-Z3-L122-LV | 2027-12-05 → 2027-11-30 (-5d) | 2027-12-06 → 2027-12-01 (-5d) | -185d → -181d |
| RHD4CZ3L122LV4300 | Installation of Distribution Pillars for Low Voltage Network - (RD-L-12/2)-Z3-L122-LV | 2027-12-07 → 2027-12-02 (-5d) | 2027-12-09 → 2027-12-05 (-4d) | -185d → -181d |
| 4257 | **RHD4-02-002-L122-(LV)-Low Voltage Drawpit** | 2027-09-13 → 2027-09-14 (+1d) | 2027-09-16 → 2027-09-18 (+2d) |  |
| RHD4CZ3L122LV5100 | Excavation of Drawpit size 900x900x1000mm for Low Voltage Network - (RD-L-12/2)-Z3-L122-LV | 2027-09-13 → 2027-09-14 (+1d) | 2027-09-14 → 2027-09-15 (+1d) | -152d → -153d |
| RHD4CZ3L122LV5200 | Installation of Drawpit size 900x900x1000mm for Low Voltage Network - (RD-L-12/2)-Z3-L122-LV | 2027-09-15 → 2027-09-16 (+1d) | 2027-09-16 → 2027-09-18 (+2d) | -152d → -153d |
| 1988 | **RHD4-02-002-L122-(LV)-Low Voltage cables** | 2027-11-06 → 2027-11-01 (-5d) | 2027-12-05 → 2027-11-30 (-5d) |  |
| RHD4CZ3L122LV3100 | Excavation for Low Voltage Cables for Low Voltage Network - (RD-L-12/2)-Z3-L122-LV | 2027-11-06 → 2027-11-01 (-5d) | 2027-11-14 → 2027-11-09 (-5d) | -185d → -181d |
| RHD4CZ3L122LV3200 | Cable Laying of Low Voltage Cables for Low Voltage Network - (RD-L-12/2)-Z3-L122-LV | 2027-11-15 → 2027-11-10 (-5d) | 2027-11-22 → 2027-11-17 (-5d) | -185d → -181d |
| RHD4CZ3L122LV3300 | Warning tape and Backfill for Low Voltage Cables for Low Voltage Network - (RD-L-12/2)-Z3-L122-LV | 2027-11-23 → 2027-11-18 (-5d) | 2027-11-30 → 2027-11-25 (-5d) | -185d → -181d |
| RHD4CZ3L122LV3400 | Testing of Low Voltage Cables for Low Voltage Network - (RD-L-12/2)-Z3-L122-LV | 2027-12-01 → 2027-11-27 (-4d) | 2027-12-05 → 2027-11-30 (-5d) | -181d → -177d |
| 1991 | **RHD4-02-002-Z3-L122-Street Lighting Network - SL** | 2027-09-13 → 2027-09-14 (+1d) | 2028-07-04 → 2028-07-01 (-3d) |  |
| 1994 | **RHD4-02-002-L122-(SL)-Street Lighting cables** | 2028-04-20 → 2028-04-17 (-3d) | 2028-06-19 → 2028-06-15 (-4d) |  |
| RHD4CZ3L122SL3100 | Excavation for Street Lighting Cables for Street Lighting Network - (RD-L-12/2)-Z3-L122-SL | 2028-04-20 → 2028-04-17 (-3d) | 2028-05-10 → 2028-05-03 (-7d) | -165d → -162d |
| RHD4CZ3L122SL3200 | Cable Laying of Street Lighting Cables for Street Lighting Network - (RD-L-12/2)-Z3-L122-SL | 2028-05-11 → 2028-05-08 (-3d) | 2028-05-25 → 2028-05-22 (-3d) | -165d → -162d |
| RHD4CZ3L122SL3300 | Warning tape and Backfill for Street Lighting Cables for Street Lighting Network - (RD-L-12/2)-Z3-L122-SL | 2028-05-27 → 2028-05-23 (-4d) | 2028-06-10 → 2028-06-06 (-4d) | -165d → -162d |
| RHD4CZ3L122SL3400 | Testing of Street Lighting Cables for Street Lighting Network - (RD-L-12/2)-Z3-L122-SL | 2028-06-11 → 2028-06-07 (-4d) | 2028-06-19 → 2028-06-15 (-4d) | -165d → -162d |
| 1997 | **RHD4-02-002-L122-(SL)-Street Lighting Earthing System** | 2028-06-24 → 2028-06-20 (-4d) | 2028-06-25 → 2028-06-21 (-4d) |  |
| RHD4CZ3L122SL6100 | Installation of Earthing for Lighting Poles and Fedder Pillers for Street Lighting Network - (RD-L-12/2)-Z3-L122-SL | 2028-06-24 → 2028-06-20 (-4d) | 2028-06-25 → 2028-06-21 (-4d) | -165d → -162d |
| 5019 | **RHD4-02-002-L122-(SL)-Street Lighting duct banks** | 2027-09-13 → 2027-09-14 (+1d) | 2027-10-03 → 2027-10-04 (+1d) |  |
| RHD4CZ3L122SL2100 | Excavation of Duct Banks for Street Lighting Network - (RD-L-12/2)-Z3-L122-SL | 2027-09-13 → 2027-09-14 (+1d) | 2027-09-15 → 2027-09-16 (+1d) | -158d → -159d |
| RHD4CZ3L122SL2200 | Installation of Duct Banks for Street Lighting Network - (RD-L-12/2)-Z3-L122-SL | 2027-09-16 → 2027-09-18 (+2d) | 2027-09-20 → 2027-09-21 (+1d) | -158d → -159d |

| ID | Task | Start | Finish | Total float |
| --- | --- | --- | --- | --- |
| RHD4CZ3L122SL2300 | Pouring of Duct Banks for Street Lighting Network - (RD-L-12/2)-Z3-L122-SL | 2027-09-21 → 2027-09-22 (+1d) | 2027-09-27 → 2027-09-28 (+1d) | -158d → -159d |
| RHD4CZ3L122SL2400 | Backfilling of Duct Banks for Street Lighting Network - (RD-L-12/2)-Z3-L122-SL | 2027-09-28 → 2027-09-29 (+1d) | 2027-10-03 → 2027-10-04 (+1d) | -151d → -152d |
| 5020 | **RHD4-02-002-L122-(SL)-Street Lighting Drawpit** | 2027-09-28 → 2027-09-29 (+1d) | 2027-10-06 → 2027-10-07 (+1d) |  |
| RHD4CZ3L122SL5100 | Excavation of Drawpit size 600x600x900mm for Street Lighting Network - (RD-L-12/2)-Z3-L122-SL | 2027-09-28 → 2027-09-29 (+1d) | 2027-09-29 → 2027-09-30 (+1d) | -158d → -159d |
| RHD4CZ3L122SL5200 | Installation of Drawpit size 600x600x900mm for Street Lighting Network - (RD-L-12/2)-Z3-L122-SL | 2027-09-30 → 2027-10-02 (+2d) | 2027-10-06 → 2027-10-07 (+1d) | -158d → -159d |
| 1995 | **RHD4-02-002-L122-(SL)-Street Lighting Poles** | 2027-10-14 → 2027-10-10 (-4d) | 2028-07-04 → 2028-07-01 (-3d) |  |
| RHD4CZ3L122SL1100 | Excavation for RC Base for Lighting Poles for Street Lighting Network - (RD-L-12/2)-Z3-L122-SL | 2027-10-14 → 2027-10-10 (-4d) | 2027-10-23 → 2027-10-18 (-5d) | -175d → -171d |
| RHD4CZ3L122SL1200 | Installation for RC Base for Lighting Poles for Street Lighting Network - (RD-L-12/2)-Z3-L122-SL | 2028-04-02 → 2028-03-29 (-4d) | 2028-04-10 → 2028-04-06 (-4d) | -198d → -195d |
| RHD4CZ3L122SL1300 | Backfill for RC Base for Lighting Poles for Street Lighting Network - (RD-L-12/2)-Z3-L122-SL | 2028-04-11 → 2028-04-08 (-3d) | 2028-04-19 → 2028-04-16 (-3d) | -198d → -195d |
| RHD4CZ3L122SL1400 | Installation for Lighting Poles for Street Lighting Network - (RD-L-12/2)-Z3-L122-SL | 2028-06-11 → 2028-06-07 (-4d) | 2028-06-22 → 2028-06-19 (-3d) | -165d → -162d |
| RHD4CZ3L122SL1500 | Luminaire Installation for Lighting Poles for Street Lighting Network - (RD-L-12/2)-Z3-L122-SL | 2028-06-26 → 2028-06-22 (-4d) | 2028-07-04 → 2028-07-01 (-3d) | -165d → -162d |
| 2003 | **RHD4-02-002-Z3-L122-Telecommunications Network - TC** | 2027-01-02 → 2027-01-09 (+7d) | 2028-06-29 → 2028-06-26 (-3d) |  |
| 2004 | **RHD4-02-002-L122-(TC)-Telecommunications Ducts** | 2028-04-20 → 2028-04-17 (-3d) | 2028-06-29 → 2028-06-26 (-3d) |  |
| RHD4CZ3L122TC2100 | Excavation of HDPE Ducts for Telecom Network - (RD-L-12/2)-Z3-L122-TC | 2028-04-20 → 2028-04-17 (-3d) | 2028-05-17 → 2028-05-14 (-3d) | -198d → -195d |
| RHD4CZ3L122TC2200 | Installation of HDPE Ducts for Telecom Network - (RD-L-12/2)-Z3-L122-TC | 2028-05-18 → 2028-05-15 (-3d) | 2028-05-30 → 2028-05-27 (-3d) | -193d → -190d |
| RHD4CZ3L122TC2400 | Backfilling of HDPE Ducts for Telecom Network - (RD-L-12/2)-Z3-L122-TC | 2028-06-06 → 2028-06-03 (-3d) | 2028-06-29 → 2028-06-26 (-3d) | -198d → -195d |
| 2005 | **RHD4-02-002-L122-(TC)-Telecommunications Manholes** | 2028-05-18 → 2028-05-15 (-3d) | 2028-06-05 → 2028-06-01 (-4d) |  |
| RHD4CZ3L122TC5100 | Excavation for Manholes for Telecom Network - (RD-L-12/2)-Z3-L122-TC | 2028-05-18 → 2028-05-15 (-3d) | 2028-05-27 → 2028-05-23 (-4d) | -198d → -195d |
| RHD4CZ3L122TC5200 | Installation of Manholes for Telecom Network - (RD-L-12/2)-Z3-L122-TC | 2028-05-28 → 2028-05-24 (-4d) | 2028-06-05 → 2028-06-01 (-4d) | -198d → -195d |
| 2006 | **RHD4-02-002-L122-(TC)-Telecomminications Road Crossings** | 2027-01-02 → 2027-01-09 (+7d) | 2027-02-02 → 2027-01-30 (-3d) |  |
| RHD4CZ3L122TC3100 | Excavation for Road Crossings for Telecom Network - (RD-L-12/2)-Z3-L122-TC | 2027-01-02 → 2027-01-09 (+7d) | 2027-01-03 → 2027-01-10 (+7d) | -154d → -160d |
| RHD4CZ3L122TC3200 | Installation of Road Crossings for Telecom Network - (RD-L-12/2)-Z3-L122-TC | 2027-01-23 → 2027-01-20 (-3d) | 2027-01-25 → 2027-01-21 (-4d) | -168.02d → -166d |
| RHD4CZ3L122TC3300 | Pouring of Road Crossings for Telecom Network - (RD-L-12/2)-Z3-L122-TC | 2027-01-25 → 2027-01-23 (-2d) | 2027-01-27 → 2027-01-24 (-3d) | -168.02d → -166d |
| RHD4CZ3L122TC3400 | Backfilling of Road Crossings for Telecom Network - (RD-L-12/2)-Z3-L122-TC | 2027-01-27 → 2027-01-25 (-2d) | 2027-02-02 → 2027-01-30 (-3d) | -168.02d → -166d |
| 2007 | **RHD4-02-002-Z3-L122-Information and Communication Technologies - ICT** | 2027-01-04 → 2027-01-11 (+7d) | 2027-05-09 → 2027-04-28 (-11d) |  |
| 2008 | **RHD4-02-002-L122-(ICT)-Information and Communication Technologies Ducts** | 2027-03-02 → 2027-02-18 (-12d) | 2027-05-09 → 2027-04-28 (-11d) |  |
| RHD4CZ3L122ICT2100 | Excavation of HDPE Ducts for ICT Network - (RD-L-12/2)-Z3-L122-ICT | 2027-03-02 → 2027-02-18 (-12d) | 2027-03-28 → 2027-03-17 (-11d) | -167d → -158d |
| RHD4CZ3L122ICT2200 | Installation of HDPE Ducts for ICT Network - (RD-L-12/2)-Z3-L122-ICT | 2027-03-29 → 2027-03-18 (-11d) | 2027-04-15 → 2027-04-05 (-10d) | -167d → -158d |
| RHD4CZ3L122ICT2400 | Backfilling of HDPE Ducts for ICT Network - (RD-L-12/2)-Z3-L122-ICT | 2027-04-17 → 2027-04-06 (-11d) | 2027-05-09 → 2027-04-28 (-11d) | -167d → -158d |
| 2009 | **RHD4-02-002-L122-(ICT)-Information and Communication Technologies Manholes** | 2027-03-29 → 2027-03-18 (-11d) | 2027-04-15 → 2027-04-05 (-10d) |  |
| RHD4CZ3L122ICT5100 | Excavation for Manholes for ICT Network - (RD-L-12/2)-Z3-L122-ICT | 2027-03-29 → 2027-03-18 (-11d) | 2027-04-06 → 2027-03-27 (-10d) | -167d → -158d |
| RHD4CZ3L122ICT5200 | Installation of Manholes for ICT Network - (RD-L-12/2)-Z3-L122-ICT | 2027-04-07 → 2027-03-28 (-10d) | 2027-04-15 → 2027-04-05 (-10d) | -167d → -158d |
| 2010 | **RHD4-02-002-L122-(ICT)-Information and Communication Technologies Road Crossings** | 2027-01-04 → 2027-01-11 (+7d) | 2027-03-01 → 2027-02-17 (-12d) |  |
| RHD4CZ3L122ICT3100 | Excavation for Road Crossings for ICT Network - (RD-L-12/2)-Z3-L122-ICT | 2027-01-04 → 2027-01-11 (+7d) | 2027-01-07 → 2027-01-14 (+7d) | -154d → -160d |
| RHD4CZ3L122ICT3200 | Installation of Road Crossings for ICT Network - (RD-L-12/2)-Z3-L122-ICT | 2027-02-14 → 2027-02-03 (-11d) | 2027-02-15 → 2027-02-04 (-11d) | -185d → -176d |
| RHD4CZ3L122ICT3300 | Pouring of Road Crossings for ICT Network - (RD-L-12/2)-Z3-L122-ICT | 2027-02-16 → 2027-02-06 (-10d) | 2027-02-21 → 2027-02-10 (-11d) | -185d → -176d |
| RHD4CZ3L122ICT3400 | Backfilling of Road Crossings for ICT Network - (RD-L-12/2)-Z3-L122-ICT | 2027-02-23 → 2027-02-11 (-12d) | 2027-03-01 → 2027-02-17 (-12d) | -185d → -176d |
| 2011 | **RHD4-02-002-Z3-L122-Security Network - CCTV** | 2028-07-01 → 2028-06-27 (-4d) | 2028-08-16 → 2028-08-13 (-3d) |  |
| 2012 | **RHD4-02-002-L122-(CCTV)-Civil Works** | 2028-07-01 → 2028-06-27 (-4d) | 2028-07-11 → 2028-07-08 (-3d) |  |
| RHD4CZ3L122CCTV2100 | Civil Works for Security Network - (RD-L-12/2)-Z3-L122-CCTV | 2028-07-01 → 2028-06-27 (-4d) | 2028-07-11 → 2028-07-08 (-3d) | -198d → -195d |
| 2013 | **RHD4-02-002-L122-(CCTV)-CCTV Poles** | 2028-07-12 → 2028-07-09 (-3d) | 2028-07-23 → 2028-07-19 (-4d) |  |
| RHD4CZ3L122CCTV1100 | Excavation for RC Base for CCTV Poles for Security Network - (RD-L-12/2)-Z3-L122-CCTV | 2028-07-12 → 2028-07-09 (-3d) | 2028-07-13 → 2028-07-10 (-3d) | -198d → -195d |
| RHD4CZ3L122CCTV1200 | Installation for RC Base for CCTV Poles for Security Network - (RD-L-12/2)-Z3-L122-CCTV | 2028-07-15 → 2028-07-11 (-4d) | 2028-07-16 → 2028-07-12 (-4d) | -198d → -195d |
| RHD4CZ3L122CCTV1300 | Backfill for RC Base for CCTV Poles for Security Network - (RD-L-12/2)-Z3-L122-CCTV | 2028-07-17 → 2028-07-13 (-4d) | 2028-07-18 → 2028-07-15 (-3d) | -198d → -195d |
| RHD4CZ3L122CCTV1400 | Installation for CCTV Poles for Security Network - (RD-L-12/2)-Z3-L122-CCTV | 2028-07-19 → 2028-07-16 (-3d) | 2028-07-20 → 2028-07-17 (-3d) | -198d → -195d |
| RHD4CZ3L122CCTV1500 | Protection post Installation for CCTV Poles for Security Network - (RD-L-12/2)-Z3-L122-CCTV | 2028-07-22 → 2028-07-18 (-4d) | 2028-07-23 → 2028-07-19 (-4d) | -176d → -173d |
| 2014 | **RHD4-02-002-L122-(CCTV)-Camera** | 2028-07-24 → 2028-07-20 (-4d) | 2028-07-25 → 2028-07-22 (-3d) |  |
| RHD4CZ3L122CCTV3100 | Installation for Cameras for Security Network - (RD-L-12/2)-Z3-L122-CCTV | 2028-07-24 → 2028-07-20 (-4d) | 2028-07-25 → 2028-07-22 (-3d) | -198d → -195d |
| 2015 | **RHD4-02-002-L122-(CCTV)-Power and Infrastructure** | 2028-07-22 → 2028-07-18 (-4d) | 2028-07-25 → 2028-07-22 (-3d) |  |
| RHD4CZ3L122CCTV4100 | Installation of Power outlet, UPS and midspan for PTZ Camerafor Cameras for Security Network - (RD-L-12/2)-Z3-L122-CCTV | 2028-07-22 → 2028-07-18 (-4d) | 2028-07-23 → 2028-07-19 (-4d) | -198d → -195d |
| RHD4CZ3L122CCTV4200 | Short Range Wireless PoP wireless Bridgefor CCTV Poles for Security Network - (RD-L-12/2)-Z3-L122-CCTV | 2028-07-24 → 2028-07-20 (-4d) | 2028-07-25 → 2028-07-22 (-3d) | -198d → -195d |
| 2017 | **RHD4-02-002-L122-(CCTV)-CCTV Panels and Components** | 2028-07-26 → 2028-07-23 (-3d) | 2028-08-16 → 2028-08-13 (-3d) |  |
| RHD4CZ3L122CCTV6100 | Installation for CCTV Panels for Security Network - (RD-L-12/2)-Z3-L122-CCTV | 2028-07-26 → 2028-07-23 (-3d) | 2028-08-16 → 2028-08-13 (-3d) | -198d → -195d |
| 1461 | **RHD4-02-002-Z3-C083** | 2027-01-02 → 2027-01-09 (+7d) | 2028-10-04 → 2028-10-01 (-3d) |  |
| 567 | **RHD4-02-002-Z3-C083-Sewage Network - SW** | 2027-05-19 → 2027-05-13 (-6d) | 2027-06-30 → 2027-06-29 (-1d) |  |
| 577 | **RHD4-02-002-C083-(SW)-MH Works - 1200 mm diameter** | 2027-06-07 → 2027-06-06 (-1d) | 2027-06-30 → 2027-06-29 (-1d) |  |
| RHD4CZ3C083SW3100 | Excavation and PC Blinding works for MH 1200 mm - (RD-C-8 /3)-Z3-C083-SW | 2027-06-07 → 2027-06-06 (-1d) | 2027-06-09 → 2027-06-08 (-1d) | -179d → -178d |
| RHD4CZ3C083SW3200 | Installation of Base for MH 1200 mm - (RD-C-8 /3)-Z3-C083-SW | 2027-06-10 → 2027-06-09 (-1d) | 2027-06-15 → 2027-06-14 (-1d) | -179d → -178d |
| RHD4CZ3C083SW3300 | MH Ring and C.Slab works and Backfilling works for MH 1200 mm - (RD-C-8 /3)-Z3-C083-SW | 2027-06-16 → 2027-06-15 (-1d) | 2027-06-21 → 2027-06-20 (-1d) | -179d → -178d |
| RHD4CZ3C083SW3400 | Steel Cover for MH 1200 mm - (RD-C-8 /3)-Z3-C083-SW | 2027-06-22 → 2027-06-21 (-1d) | 2027-06-24 → 2027-06-23 (-1d) | -179d → -178d |
| RHD4CZ3C083SW3500 | Finishing, Benching, Testing works for MH 1200 mm - (RD-C-8 /3)-Z3-C083-SW | 2027-06-26 → 2027-06-24 (-2d) | 2027-06-30 → 2027-06-29 (-1d) | -179d → -178d |
| 573 | **RHD4-02-002-C083-(SW)-UPVC Pipes - 200 mm diameter** | 2027-05-19 → 2027-05-13 (-6d) | 2027-06-06 → 2027-06-05 (-1d) |  |
| RHD4CZ3C083SW2100 | Excavation works for UPVC Pipe Line 200 mm - (RD-C-8 /3)-Z3-C083-SW | 2027-05-19 → 2027-05-13 (-6d) | 2027-05-22 → 2027-05-20 (-2d) | -179d → -178d |
| RHD4CZ3C083SW2200 | Bedding works for UPVC Pipe Line 200 mm - (RD-C-8 /3)-Z3-C083-SW | 2027-05-23 → 2027-05-22 (-1d) | 2027-05-25 → 2027-05-24 (-1d) | -179d → -178d |
| RHD4CZ3C083SW2300 | Installing for UPVC Pipe Line 200 mm - (RD-C-8 /3)-Z3-C083-SW | 2027-05-26 → 2027-05-25 (-1d) | 2027-05-30 → 2027-05-29 (-1d) | -179d → -178d |
| RHD4CZ3C083SW2400 | Primary Test for UPVC Pipe Line 200 mm - (RD-C-8 /3)-Z3-C083-SW | 2027-05-31 → 2027-05-30 (-1d) | 2027-06-02 → 2027-06-01 (-1d) | -179d → -178d |
| RHD4CZ3C083SW2500 | Backfilling and warning tape works for UPVC Pipe Line 200 mm - (RD-C-8 /3)-Z3-C083-SW | 2027-06-03 → 2027-06-02 (-1d) | 2027-06-06 → 2027-06-05 (-1d) | -179d → -178d |
| 1640 | **RHD4-02-002-Z3-C083-Road Works - RD** | 2027-01-28 → 2027-02-04 (+7d) | 2028-10-04 → 2028-10-01 (-3d) |  |
| 1641 | **RHD4-02-002-C083-(RD)-Subgrade** | 2027-01-28 → 2027-02-04 (+7d) | 2027-02-01 → 2027-02-08 (+7d) |  |
| RHD4CZ3C083RD1100 | Supply, lay and compaction subgrade compacted thickness 300 mm for Roads - (RD-C-8 /3)-Z3-C083-RD | 2027-01-28 → 2027-02-04 (+7d) | 2027-02-01 → 2027-02-08 (+7d) | -136d → -142d |

| ID | Task | Start | Finish | Total float |
| --- | --- | --- | --- | --- |
| 1642 | **RHD4-02-002-C083-(RD)-Aggregate Base Course** | 2027-02-02 → 2027-02-09 (+7d) | 2027-02-06 → 2027-02-13 (+7d) |  |
| RHD4CZ3C083RD2100 | Supply, lay and compaction Aggregate base course compacted thickness 300 mmfor Roads - (RD-C-8 /3)-Z3-C083-RD | 2027-02-02 → 2027-02-09 (+7d) | 2027-02-06 → 2027-02-13 (+7d) | -136d → -142d |
| 1643 | **RHD4-02-002-C083-(RD)-Bituminous base course Two Layers, including (MC1)&(RC2)** | 2027-02-07 → 2027-02-14 (+7d) | 2027-12-14 → 2027-12-09 (-5d) |  |
| RHD4CZ3C083RD3100 | Supply, lay and Asphaltic base course including Prime Coat (MC1) for 1st Layer - (RD-C-8 /3)-Z3-C083-RD | 2027-02-07 → 2027-02-14 (+7d) | 2027-02-10 → 2027-02-17 (+7d) | -136d → -142d |
| RHD4CZ3C083RD3200 | Supply, lay and Asphaltic base course including Tack Coat (RC2) for 2nd Layer - (RD-C-8 /3)-Z3-C083-RD | 2027-12-09 → 2027-12-06 (-3d) | 2027-12-14 → 2027-12-09 (-5d) | -161.02d → -158d |
| 1645 | **RHD4-02-002-C083-(RD)-Precast Concrete Curb** | 2027-12-14 → 2027-12-11 (-3d) | 2027-12-27 → 2027-12-22 (-5d) |  |
| RHD4CZ3C083RD5100 | Supply and installation Precast Concrete Kerb for Roads - (RD-C-8 /3)-Z3-C083-RD | 2027-12-14 → 2027-12-11 (-3d) | 2027-12-27 → 2027-12-22 (-5d) | -161.02d → -158d |
| 1648 | **RHD4-02-002-C083-(RD)-Traffic Signage** | 2028-09-20 → 2028-09-17 (-3d) | 2028-09-27 → 2028-09-24 (-3d) |  |
| RHD4CZ3C083RD8100 | Installation of Traffic Signage for Road Network - (RD-C-8 /3)-Z3-C083-RD | 2028-09-20 → 2028-09-17 (-3d) | 2028-09-27 → 2028-09-24 (-3d) | -179d → -176d |
| 1644 | **RHD4-02-002-C083-(RD)-Bituminous concrete wearing course including tack coat (RC2)** | 2028-09-28 → 2028-09-25 (-3d) | 2028-10-04 → 2028-10-01 (-3d) |  |
| RHD4CZ3C083RD4100 | Supply, lay and compaction Asphaltic wearing course including tack Coat (RC2)for Road Network - (RD-C-8 /3)-Z3-C083-RD | 2028-09-28 → 2028-09-25 (-3d) | 2028-10-04 → 2028-10-01 (-3d) | -179d → -176d |
| 1647 | **RHD4-02-002-C083-(RD)-Pavement Marking** | 2028-08-03 → 2028-07-29 (-5d) | 2028-08-10 → 2028-08-05 (-5d) |  |
| RHD4CZ3C083RD7100 | Pavement Markings for Road Network - (RD-C-8 /3)-Z3-C083-RD | 2028-08-03 → 2028-07-29 (-5d) | 2028-08-10 → 2028-08-05 (-5d) | -180d → -175d |
| 1465 | **RHD4-02-002-Z3-C083-Storm Network - ST** | 2027-01-02 → 2027-01-09 (+7d) | 2027-03-31 → 2027-03-27 (-4d) |  |
| 5251 | **RHD4-02-002-C083-(ST)-GRP Pipes - 600 mm diameter** | 2027-01-07 → 2027-01-14 (+7d) | 2027-01-18 → 2027-01-25 (+7d) |  |
| RHD4CZ3C083ST1102 | Excavation works for GRP Pipe Line 600 mm - (RD-C-8 /3)-Z3-C083-ST | 2027-01-07 → 2027-01-14 (+7d) | 2027-01-09 → 2027-01-16 (+7d) | -136d → -142d |
| RHD4CZ3C083ST1202 | Bedding works for GRP Pipe Line 600 mm - (RD-C-8 /3)-Z3-C083-ST | 2027-01-10 → 2027-01-17 (+7d) | 2027-01-11 → 2027-01-18 (+7d) | -136d → -142d |
| RHD4CZ3C083ST1302 | Installing for GRP Pipe Line 600 mm - (RD-C-8 /3)-Z3-C083-ST | 2027-01-12 → 2027-01-19 (+7d) | 2027-01-13 → 2027-01-20 (+7d) | -136d → -142d |
| RHD4CZ3C083ST1402 | Primary Test for GRP Pipe Line 600 mm - (RD-C-8 /3)-Z3-C083-ST | 2027-01-14 → 2027-01-21 (+7d) | 2027-01-16 → 2027-01-23 (+7d) | -136d → -142d |
| RHD4CZ3C083ST1502 | Backfilling and warning tape works for GRP Pipe Line 600 mm - (RD-C-8 /3)-Z3-C083-ST | 2027-01-17 → 2027-01-24 (+7d) | 2027-01-18 → 2027-01-25 (+7d) | -136d → -142d |
| 710 | **RHD4-02-002-C083-(ST)-GRP Pipes - 500 mm diameter** | 2027-01-10 → 2027-01-17 (+7d) | 2027-01-23 → 2027-01-30 (+7d) |  |
| RHD4CZ3C083ST1101 | Excavation works for GRP Pipe Line 500 mm - (RD-C-8 /3)-Z3-C083-ST | 2027-01-10 → 2027-01-17 (+7d) | 2027-01-11 → 2027-01-18 (+7d) | -120d → -126d |
| RHD4CZ3C083ST1201 | Bedding works for GRP Pipe Line 500 mm - (RD-C-8 /3)-Z3-C083-ST | 2027-01-12 → 2027-01-19 (+7d) | 2027-01-13 → 2027-01-20 (+7d) | -120d → -126d |
| RHD4CZ3C083ST1301 | Installing for GRP Pipe Line 500 mm - (RD-C-8 /3)-Z3-C083-ST | 2027-01-14 → 2027-01-21 (+7d) | 2027-01-17 → 2027-01-24 (+7d) | -120d → -126d |
| RHD4CZ3C083ST1401 | Primary Test for GRP Pipe Line 500 mm - (RD-C-8 /3)-Z3-C083-ST | 2027-01-18 → 2027-01-25 (+7d) | 2027-01-19 → 2027-01-26 (+7d) | -120d → -126d |
| RHD4CZ3C083ST1501 | Backfilling and warning tape works for GRP Pipe Line 500 mm - (RD-C-8 /3)-Z3-C083-ST | 2027-01-20 → 2027-01-27 (+7d) | 2027-01-23 → 2027-01-30 (+7d) | -120d → -126d |
| 1482 | **RHD4-02-002-C083-(ST)-MH Works - 1200 mm diameter** | 2027-01-02 → 2027-01-09 (+7d) | 2027-03-31 → 2027-03-27 (-4d) |  |
| RHD4CZ3C083ST3100 | Excavation and PC Blinding works for MH 1200 mm - (RD-C-8 /3)-Z3-C083-ST | 2027-01-02 → 2027-01-09 (+7d) | 2027-01-06 → 2027-01-13 (+7d) | -168d → -174d |
| RHD4CZ3C083ST3200 | Installation of Base for MH 1200 mm - (RD-C-8 /3)-Z3-C083-ST | 2027-01-07 → 2027-01-14 (+7d) | 2027-01-12 → 2027-01-19 (+7d) | -168d → -174d |
| RHD4CZ3C083ST3300 | MH Ring and C.Slab works and Backfilling works for MH 1200 mm - (RD-C-8 /3)-Z3-C083-ST | 2027-01-13 → 2027-01-20 (+7d) | 2027-01-18 → 2027-01-25 (+7d) | -168d → -174d |
| RHD4CZ3C083ST3400 | Steel Cover for MH 1200 mm - (RD-C-8 /3)-Z3-C083-ST | 2027-03-20 → 2027-03-16 (-4d) | 2027-03-25 → 2027-03-21 (-4d) | -163.02d → -160d |
| RHD4CZ3C083ST3500 | Finishing, Benching, Testing works for MH 1200 mm - (RD-C-8 /3)-Z3-C083-ST | 2027-03-25 → 2027-03-22 (-3d) | 2027-03-31 → 2027-03-27 (-4d) | -163.02d → -160d |
| 1466 | **RHD4-02-002-C083-(ST)-GRP Pipes - 400 mm diameter** | 2027-01-19 → 2027-01-26 (+7d) | 2027-01-30 → 2027-02-06 (+7d) |  |
| RHD4CZ3C083ST1100 | Excavation works for GRP Pipe Line 400 mm - (RD-C-8 /3)-Z3-C083-ST | 2027-01-19 → 2027-01-26 (+7d) | 2027-01-20 → 2027-01-27 (+7d) | -139d → -145d |
| RHD4CZ3C083ST1200 | Bedding works for GRP Pipe Line 400 mm - (RD-C-8 /3)-Z3-C083-ST | 2027-01-21 → 2027-01-28 (+7d) | 2027-01-23 → 2027-01-30 (+7d) | -139d → -145d |
| RHD4CZ3C083ST1300 | Installing for GRP Pipe Line 400 mm - (RD-C-8 /3)-Z3-C083-ST | 2027-01-24 → 2027-01-31 (+7d) | 2027-01-25 → 2027-02-01 (+7d) | -139d → -145d |
| RHD4CZ3C083ST1400 | Primary Test for GRP Pipe Line 400 mm - (RD-C-8 /3)-Z3-C083-ST | 2027-01-26 → 2027-02-02 (+7d) | 2027-01-27 → 2027-02-03 (+7d) | -139d → -145d |
| RHD4CZ3C083ST1500 | Backfilling and warning tape works for GRP Pipe Line 400 mm - (RD-C-8 /3)-Z3-C083-ST | 2027-01-28 → 2027-02-04 (+7d) | 2027-01-30 → 2027-02-06 (+7d) | -139d → -145d |
| 1480 | **RHD4-02-002-C083-(ST)-UPVC Pipes - 300 mm diameter** | 2027-01-31 → 2027-02-07 (+7d) | 2027-03-20 → 2027-03-15 (-5d) |  |
| RHD4CZ3C083ST2100 | Excavation works for UPVC Pipe Line 300 mm - (RD-C-8 /3)-Z3-C083-ST | 2027-01-31 → 2027-02-07 (+7d) | 2027-02-02 → 2027-02-09 (+7d) | -139d → -145d |
| RHD4CZ3C083ST2200 | Bedding works for UPVC Pipe Line 300 mm - (RD-C-8 /3)-Z3-C083-ST | 2027-02-03 → 2027-02-10 (+7d) | 2027-02-04 → 2027-02-11 (+7d) | -139d → -145d |
| RHD4CZ3C083ST2300 | Installing for UPVC Pipe Line 300 mm - (RD-C-8 /3)-Z3-C083-ST | 2027-02-06 → 2027-02-13 (+7d) | 2027-02-08 → 2027-02-15 (+7d) | -139d → -145d |
| RHD4CZ3C083ST2400 | Primary Test for UPVC Pipe Line 300 mm - (RD-C-8 /3)-Z3-C083-ST | 2027-03-14 → 2027-03-07 (-7d) | 2027-03-16 → 2027-03-08 (-8d) | -163.02d → -160d |
| RHD4CZ3C083ST2500 | Backfilling and warning tape works for UPVC Pipe Line 300 mm - (RD-C-8 /3)-Z3-C083-ST | 2027-03-16 → 2027-03-13 (-3d) | 2027-03-20 → 2027-03-15 (-5d) | -163.02d → -160d |
| 1488 | **RHD4-02-002-C083-(ST)-Concrete Encasement** | 2027-02-07 → 2027-02-14 (+7d) | 2027-02-08 → 2027-02-15 (+7d) |  |
| RHD4CZ3C083ST6100 | Pipe Encasement for Storm Pipelines - (RD-C-8 /3)-Z3-C083-ST | 2027-02-07 → 2027-02-14 (+7d) | 2027-02-08 → 2027-02-15 (+7d) | -137d → -143d |
| 1489 | **RHD4-02-002-Z3-C083-Catch Basin - ST** | 2027-01-19 → 2027-01-26 (+7d) | 2027-04-06 → 2027-04-01 (-5d) |  |
| 1490 | **RHD4-02-002-C083-(ST)-Single Catch Basin Works** | 2027-01-19 → 2027-01-26 (+7d) | 2027-04-06 → 2027-04-01 (-5d) |  |
| RHD4CZ3C083ST7100 | Excavation works for Single Catch Basin - (RD-C-8 /3)-Z3-C083-ST | 2027-01-19 → 2027-01-26 (+7d) | 2027-01-21 → 2027-01-28 (+7d) | -168d → -174d |
| RHD4CZ3C083ST7200 | PC Blinding, Installation and Pipe connection for Single Catch Basin - (RD-C-8 /3)-Z3-C083-ST | 2027-01-23 → 2027-01-30 (+7d) | 2027-01-25 → 2027-02-01 (+7d) | -168d → -174d |
| RHD4CZ3C083ST7300 | Rings & C.Slab & Final Backfill for Single Catch Basin - (RD-C-8 /3)-Z3-C083-ST | 2027-01-26 → 2027-02-02 (+7d) | 2027-01-28 → 2027-02-04 (+7d) | -168d → -174d |
| RHD4CZ3C083ST7400 | Steel Cover for Single Catch Basin - (RD-C-8 /3)-Z3-C083-ST | 2027-03-25 → 2027-03-22 (-3d) | 2027-03-29 → 2027-03-24 (-5d) | -143.02d → -140d |
| RHD4CZ3C083ST7500 | Finishing and Insulation works for Single Catch Basin - (RD-C-8 /3)-Z3-C083-ST | 2027-03-31 → 2027-03-28 (-3d) | 2027-04-06 → 2027-04-01 (-5d) | -145.02d → -142d |
| 5274 | **RHD4-02-002-C083-(ST)-Double Catch Basin Works** | 2027-01-30 → 2027-02-06 (+7d) | 2027-02-09 → 2027-02-16 (+7d) |  |
| RHD4CZ3C083ST8100 | Excavation works for Double Catch Basin - (RD-C-8 /3)-Z3-C083-ST | 2027-01-30 → 2027-02-06 (+7d) | 2027-01-31 → 2027-02-07 (+7d) | -168d → -174d |
| RHD4CZ3C083ST8200 | PC Blinding, Installation and Pipe connection for Double Catch Basin - (RD-C-8 /3)-Z3-C083-ST | 2027-02-01 → 2027-02-08 (+7d) | 2027-02-02 → 2027-02-09 (+7d) | -168d → -174d |
| RHD4CZ3C083ST8300 | Rings & C.Slab & Final Backfillfor Double Catch Basin - (RD-C-8 /3)-Z3-C083-ST | 2027-02-03 → 2027-02-10 (+7d) | 2027-02-04 → 2027-02-11 (+7d) | -168d → -174d |
| RHD4CZ3C083ST8400 | Steel Cover for Double Catch Basin - (RD-C-8 /3)-Z3-C083-ST | 2027-02-06 → 2027-02-13 (+7d) | 2027-02-07 → 2027-02-14 (+7d) | -168d → -174d |
| RHD4CZ3C083ST8500 | Finishing and Insulation works for Double Catch Basin - (RD-C-8 /3)-Z3-C083-ST | 2027-02-08 → 2027-02-15 (+7d) | 2027-02-09 → 2027-02-16 (+7d) | -168d → -174d |
| 1551 | **RHD4-02-002-Z3-C083-Potable Network - PT** | 2027-03-31 → 2027-03-28 (-3d) | 2027-06-14 → 2027-06-09 (-5d) |  |
| 1555 | **RHD4-02-002-C083-(PT)-HDPE Pipes - 400 mm diameter** | 2027-03-31 → 2027-03-28 (-3d) | 2027-05-04 → 2027-04-29 (-5d) |  |
| RHD4CZ3C083PT1103 | Excavation works for HDPE Pipline 400 mm - (RD-C-8 /3)-Z3-C083-PT | 2027-03-31 → 2027-03-28 (-3d) | 2027-04-07 → 2027-04-03 (-4d) | -163.02d → -160d |
| RHD4CZ3C083PT1203 | Bedding works for HDPE Pipline 400 mm - (RD-C-8 /3)-Z3-C083-PT | 2027-04-07 → 2027-04-04 (-3d) | 2027-04-13 → 2027-04-08 (-5d) | -163.02d → -160d |
| RHD4CZ3C083PT1303 | Installing for HDPE Pipline 400 mm - (RD-C-8 /3)-Z3-C083-PT | 2027-04-13 → 2027-04-10 (-3d) | 2027-04-22 → 2027-04-18 (-4d) | -163.02d → -160d |
| RHD4CZ3C083PT1403 | Primary Test for HDPE Pipline 400 mm - (RD-C-8 /3)-Z3-C083-PT | 2027-04-22 → 2027-04-19 (-3d) | 2027-04-27 → 2027-04-22 (-5d) | -163.02d → -160d |
| RHD4CZ3C083PT1503 | Backfilling and warning tape works for HDPE Pipline 400 mm - (RD-C-8 /3)-Z3-C083-PT | 2027-04-27 → 2027-04-24 (-3d) | 2027-05-04 → 2027-04-29 (-5d) | -163.02d → -160d |
| 1563 | **RHD4-02-002-C083-(PT)-Air Valves** | 2027-05-04 → 2027-05-01 (-3d) | 2027-05-09 → 2027-05-04 (-5d) |  |
| RHD4CZ3C083PT3103 | Installation for Air Valves for Potable Water Network - (RD-C-8 /3)-Z3-C083-PT | 2027-05-04 → 2027-05-01 (-3d) | 2027-05-06 → 2027-05-02 (-4d) | -163.02d → -160d |
| RHD4CZ3C083PT3203 | Stem and Service box for Air Valves for Potable Water Network - (RD-C-8 /3)-Z3-C083-PT | 2027-05-06 → 2027-05-03 (-3d) | 2027-05-09 → 2027-05-04 (-5d) | -163.02d → -160d |
| 1564 | **RHD4-02-002-C083-(PT)-Fire Hydrant** | 2027-05-09 → 2027-05-05 (-4d) | 2027-05-31 → 2027-05-26 (-5d) |  |

| ID | Task | Start | Finish | Total float |
| --- | --- | --- | --- | --- |
| RHD4CZ3C083PT4100 | Excavation and Bedding and Pipe Installation for Fire Hydrant - (RD-C-8 /3)-Z3-C083-PT | 2027-05-09 → 2027-05-05 (-4d) | 2027-05-13 → 2027-05-09 (-4d) | -163.02d → -160d |
| RHD4CZ3C083PT4200 | Valve Installation for Fire Hydrant - (RD-C-8 /3)-Z3-C083-PT | 2027-05-13 → 2027-05-10 (-3d) | 2027-05-22 → 2027-05-12 (-10d) | -163.02d → -160d |
| RHD4CZ3C083PT4300 | Stem for Fire Hydrant - (RD-C-8 /3)-Z3-C083-PT | 2027-05-22 → 2027-05-13 (-9d) | 2027-05-25 → 2027-05-20 (-5d) | -163.02d → -160d |
| RHD4CZ3C083PT4400 | Fire Installation for Fire Hydrant - (RD-C-8 /3)-Z3-C083-PT | 2027-05-25 → 2027-05-22 (-3d) | 2027-05-29 → 2027-05-24 (-5d) | -163.02d → -160d |
| RHD4CZ3C083PT4500 | Protection Barriers for Fire Hydrant - (RD-C-8 /3)-Z3-C083-PT | 2027-05-29 → 2027-05-25 (-4d) | 2027-05-31 → 2027-05-26 (-5d) | -163.02d → -160d |
| 1749 | **RHD4-02-002-C083-(PT)-Wash out Valve Chambers** | 2027-05-31 → 2027-05-27 (-4d) | 2027-06-09 → 2027-06-05 (-4d) |  |
| RHD4CZ3C083PT2101 | Excavation and Bedding for Wash out Valve Chambers for Potable Water Network - (RD-C-8 /3)-Z3-C083-PT | 2027-05-31 → 2027-05-27 (-4d) | 2027-06-02 → 2027-05-29 (-4d) | -163.02d → -160d |
| RHD4CZ3C083PT2201 | PC works for Wash out Valve Chambers for Potable Water Network - (RD-C-8 /3)-Z3-C083-PT | 2027-06-02 → 2027-05-30 (-3d) | 2027-06-05 → 2027-05-31 (-5d) | -163.02d → -160d |
| RHD4CZ3C083PT2301 | Installation for Wash out Valve Chambers for Potable Water Network - (RD-C-8 /3)-Z3-C083-PT | 2027-06-05 → 2027-06-01 (-4d) | 2027-06-07 → 2027-06-02 (-5d) | -163.02d → -160d |
| RHD4CZ3C083PT2401 | Backfilling works for Wash out Valve Chambers for Potable Water Network - (RD-C-8 /3)-Z3-C083-PT | 2027-06-07 → 2027-06-03 (-4d) | 2027-06-09 → 2027-06-05 (-4d) | -163.02d → -160d |
| 1750 | **RHD4-02-002-C083-(PT)-Wash out Valves** | 2027-06-09 → 2027-06-06 (-3d) | 2027-06-14 → 2027-06-09 (-5d) |  |
| RHD4CZ3C083PT3102 | Installation for Wash out Valves for Potable Water Network - (RD-C-8 /3)-Z3-C083-PT | 2027-06-09 → 2027-06-06 (-3d) | 2027-06-12 → 2027-06-07 (-5d) | -163.02d → -160d |
| RHD4CZ3C083PT3202 | Stem and Service box for Wash out Valves for Potable Water Network - (RD-C-8 /3)-Z3-C083-PT | 2027-06-12 → 2027-06-08 (-4d) | 2027-06-14 → 2027-06-09 (-5d) | -163.02d → -160d |
| 1562 | **RHD4-02-002-C083-(PT)-Air Valve Chambers** | 2027-04-07 → 2027-04-04 (-3d) | 2027-04-17 → 2027-04-12 (-5d) |  |
| RHD4CZ3C083PT2102 | Excavation and Bedding for Air Valve Chambers for Potable Water Network - (RD-C-8 /3)-Z3-C083-PT | 2027-04-07 → 2027-04-04 (-3d) | 2027-04-10 → 2027-04-05 (-5d) | -146.02d → -143d |
| RHD4CZ3C083PT2202 | PC works for Air Valve Chambers for Potable Water Network - (RD-C-8 /3)-Z3-C083-PT | 2027-04-10 → 2027-04-06 (-4d) | 2027-04-12 → 2027-04-07 (-5d) | -146.02d → -143d |
| RHD4CZ3C083PT2302 | Installation for Air Valve Chambers for Potable Water Network - (RD-C-8 /3)-Z3-C083-PT | 2027-04-12 → 2027-04-08 (-4d) | 2027-04-14 → 2027-04-10 (-4d) | -146.02d → -143d |
| RHD4CZ3C083PT2402 | Backfilling works for Air Valve Chambers for Potable Water Network - (RD-C-8 /3)-Z3-C083-PT | 2027-04-14 → 2027-04-11 (-3d) | 2027-04-17 → 2027-04-12 (-5d) | -146.02d → -143d |
| 1566 | **RHD4-02-002-Z3-C083-Irrigation Network - IRR** | 2027-06-14 → 2027-06-10 (-4d) | 2027-07-15 → 2027-07-11 (-4d) |  |
| 1571 | **RHD4-02-002-C083-(IRR)-HDPE Pipes - 315 mm diameter** | 2027-06-14 → 2027-06-10 (-4d) | 2027-07-15 → 2027-07-11 (-4d) |  |
| RHD4CZ3C083IRR1104 | Excavation works for HDPE Pipline 315 mm - (RD-C-8 /3)-Z3-C083-IRR | 2027-06-14 → 2027-06-10 (-4d) | 2027-06-20 → 2027-06-15 (-5d) | -163.02d → -160d |
| RHD4CZ3C083IRR1204 | Bedding works for HDPE Pipline 315 mm - (RD-C-8 /3)-Z3-C083-IRR | 2027-06-20 → 2027-06-16 (-4d) | 2027-06-28 → 2027-06-23 (-5d) | -163.02d → -160d |
| RHD4CZ3C083IRR1304 | Installing for HDPE Pipline 315 mm - (RD-C-8 /3)-Z3-C083-IRR | 2027-06-28 → 2027-06-24 (-4d) | 2027-07-06 → 2027-07-01 (-5d) | -163.02d → -160d |
| RHD4CZ3C083IRR1404 | Primary Test for HDPE Pipline 315 mm - (RD-C-8 /3)-Z3-C083-IRR | 2027-07-06 → 2027-07-03 (-3d) | 2027-07-10 → 2027-07-05 (-5d) | -163.02d → -160d |
| RHD4CZ3C083IRR1504 | Backfilling and warning tape works for HDPE Pipline 315 mm - (RD-C-8 /3)-Z3-C083-IRR | 2027-07-10 → 2027-07-06 (-4d) | 2027-07-15 → 2027-07-11 (-4d) | -163.02d → -160d |
| 1607 | **RHD4-02-002-Z3-C083-Low Voltage Network - LV** | 2027-07-15 → 2027-07-12 (-3d) | 2027-08-03 → 2027-07-29 (-5d) |  |
| 1610 | **RHD4-02-002-C083-(LV)-Low Voltage cables** | 2027-07-15 → 2027-07-12 (-3d) | 2027-08-03 → 2027-07-29 (-5d) |  |
| RHD4CZ3C083LV3100 | Excavation for Low Voltage Cables for Low Voltage Network - (RD-C-8 /3)-Z3-C083-LV | 2027-07-15 → 2027-07-12 (-3d) | 2027-07-21 → 2027-07-17 (-4d) | -163.02d → -160d |
| RHD4CZ3C083LV3200 | Cable Laying of Low Voltage Cables for Low Voltage Network - (RD-C-8 /3)-Z3-C083-LV | 2027-07-21 → 2027-07-18 (-3d) | 2027-07-26 → 2027-07-21 (-5d) | -142.02d → -139d |
| RHD4CZ3C083LV3300 | Warning tape and Backfill for Low Voltage Cables for Low Voltage Network - (RD-C-8 /3)-Z3-C083-LV | 2027-07-26 → 2027-07-22 (-4d) | 2027-07-31 → 2027-07-26 (-5d) | -142.02d → -139d |
| RHD4CZ3C083LV3400 | Testing of Low Voltage Cables for Low Voltage Network - (RD-C-8 /3)-Z3-C083-LV | 2027-07-31 → 2027-07-27 (-4d) | 2027-08-03 → 2027-07-29 (-5d) | -142.02d → -139d |
| 1613 | **RHD4-02-002-Z3-C083-Street Lighting Network - SL** | 2027-01-19 → 2027-01-26 (+7d) | 2027-09-19 → 2027-09-14 (-5d) |  |
| 1614 | **RHD4-02-002-C083-(SL)-Street Lighting duct banks** | 2027-01-19 → 2027-01-26 (+7d) | 2027-01-27 → 2027-02-03 (+7d) |  |
| RHD4CZ3C083SL2100 | Excavation of Duct Banks for Street Lighting Network - (RD-C-8 /3)-Z3-C083-SL | 2027-01-19 → 2027-01-26 (+7d) | 2027-01-20 → 2027-01-27 (+7d) | -136d → -142d |
| RHD4CZ3C083SL2200 | Installation of Duct Banks for Street Lighting Network - (RD-C-8 /3)-Z3-C083-SL | 2027-01-21 → 2027-01-28 (+7d) | 2027-01-23 → 2027-01-30 (+7d) | -136d → -142d |
| RHD4CZ3C083SL2300 | Pouring of Duct Banks for Street Lighting Network - (RD-C-8 /3)-Z3-C083-SL | 2027-01-24 → 2027-01-31 (+7d) | 2027-01-25 → 2027-02-01 (+7d) | -136d → -142d |
| RHD4CZ3C083SL2400 | Backfilling of Duct Banks for Street Lighting Network - (RD-C-8 /3)-Z3-C083-SL | 2027-01-26 → 2027-02-02 (+7d) | 2027-01-27 → 2027-02-03 (+7d) | -136d → -142d |
| 1615 | **RHD4-02-002-C083-(SL)-Street Lighting Drawpit** | 2027-08-03 → 2027-07-31 (-3d) | 2027-08-08 → 2027-08-03 (-5d) |  |
| RHD4CZ3C083SL5100 | Excavation of Drawpit size 600x600x900mm for Street Lighting Network - (RD-C-8 /3)-Z3-C083-SL | 2027-08-03 → 2027-07-31 (-3d) | 2027-08-05 → 2027-08-01 (-4d) | -142.02d → -139d |
| RHD4CZ3C083SL5200 | Installation of Drawpit size 600x600x900mm for Street Lighting Network - (RD-C-8 /3)-Z3-C083-SL | 2027-08-05 → 2027-08-02 (-3d) | 2027-08-08 → 2027-08-03 (-5d) | -142.02d → -139d |
| 1616 | **RHD4-02-002-C083-(SL)-Street Lighting cables** | 2027-08-04 → 2027-08-01 (-3d) | 2027-09-04 → 2027-08-30 (-5d) |  |
| RHD4CZ3C083SL3100 | Excavation for Street Lighting Cables for Street Lighting Network - (RD-C-8 /3)-Z3-C083-SL | 2027-08-04 → 2027-08-01 (-3d) | 2027-08-14 → 2027-08-09 (-5d) | -161.02d → -158d |
| RHD4CZ3C083SL3200 | Cable Laying of Street Lighting Cables for Street Lighting Network - (RD-C-8 /3)-Z3-C083-SL | 2027-08-14 → 2027-08-10 (-4d) | 2027-08-22 → 2027-08-17 (-5d) | -161.02d → -158d |
| RHD4CZ3C083SL3300 | Warning tape and Backfill for Street Lighting Cables for Street Lighting Network - (RD-C-8 /3)-Z3-C083-SL | 2027-08-22 → 2027-08-18 (-4d) | 2027-08-30 → 2027-08-25 (-5d) | -161.02d → -158d |
| RHD4CZ3C083SL3400 | Testing of Street Lighting Cables for Street Lighting Network - (RD-C-8 /3)-Z3-C083-SL | 2027-08-30 → 2027-08-26 (-4d) | 2027-09-04 → 2027-08-30 (-5d) | -161.02d → -158d |
| 1617 | **RHD4-02-002-C083-(SL)-Street Lighting Poles** | 2027-07-21 → 2027-07-18 (-3d) | 2027-09-19 → 2027-09-14 (-5d) |  |
| RHD4CZ3C083SL1100 | Excavation for RC Base for Lighting Poles for Street Lighting Network - (RD-C-8 /3)-Z3-C083-SL | 2027-07-21 → 2027-07-18 (-3d) | 2027-07-26 → 2027-07-21 (-5d) | -163.02d → -160d |
| RHD4CZ3C083SL1200 | Installation for RC Base for Lighting Poles for Street Lighting Network - (RD-C-8 /3)-Z3-C083-SL | 2027-07-26 → 2027-07-22 (-4d) | 2027-07-31 → 2027-07-26 (-5d) | -161.02d → -158d |
| RHD4CZ3C083SL1300 | Backfill for RC Base for Lighting Poles for Street Lighting Network - (RD-C-8 /3)-Z3-C083-SL | 2027-07-31 → 2027-07-27 (-4d) | 2027-08-04 → 2027-07-31 (-4d) | -161.02d → -158d |
| RHD4CZ3C083SL1400 | Installation for Lighting Poles for Street Lighting Network - (RD-C-8 /3)-Z3-C083-SL | 2027-09-04 → 2027-08-31 (-4d) | 2027-09-11 → 2027-09-06 (-5d) | -161.02d → -158d |
| RHD4CZ3C083SL1500 | Luminaire Installation for Lighting Poles for Street Lighting Network - (RD-C-8 /3)-Z3-C083-SL | 2027-09-11 → 2027-09-07 (-4d) | 2027-09-19 → 2027-09-14 (-5d) | -145.02d → -142d |
| 1618 | **RHD4-02-002-C083-(SL)-Street Lighting Feeder Pillars** | 2027-08-30 → 2027-08-26 (-4d) | 2027-09-13 → 2027-09-08 (-5d) |  |
| RHD4CZ3C083SL4100 | Leveling for Distribution Pillars for Street Lighting Network - (RD-C-8 /3)-Z3-C083-SL | 2027-08-30 → 2027-08-26 (-4d) | 2027-09-01 → 2027-08-28 (-4d) | -155.02d → -152d |
| RHD4CZ3C083SL4200 | Lean Concrete for Distribution Pillars for Street Lighting Network - (RD-C-8 /3)-Z3-C083-SL | 2027-09-01 → 2027-08-29 (-3d) | 2027-09-04 → 2027-08-30 (-5d) | -155.02d → -152d |
| RHD4CZ3C083SL4300 | Installation of Distribution Pillars for Street Lighting Network - (RD-C-8 /3)-Z3-C083-SL | 2027-09-11 → 2027-09-07 (-4d) | 2027-09-13 → 2027-09-08 (-5d) | -161.02d → -158d |
| 1619 | **RHD4-02-002-C083-(SL)-Street Lighting Earthing System** | 2027-09-13 → 2027-09-09 (-4d) | 2027-09-15 → 2027-09-11 (-4d) |  |
| RHD4CZ3C083SL6100 | Installation of Earthing for Lighting Poles and Fedder Pillers for Street Lighting Network - (RD-C-8 /3)-Z3-C083-SL | 2027-09-13 → 2027-09-09 (-4d) | 2027-09-15 → 2027-09-11 (-4d) | -161.02d → -158d |
| 1625 | **RHD4-02-002-Z3-C083-Telecommunications Network - TC** | 2027-09-15 → 2027-09-12 (-3d) | 2027-10-23 → 2027-10-18 (-5d) |  |
| 1626 | **RHD4-02-002-C083-(TC)-Telecommunications Ducts** | 2027-09-15 → 2027-09-12 (-3d) | 2027-10-23 → 2027-10-18 (-5d) |  |
| RHD4CZ3C083TC2100 | Excavation of HDPE Ducts for Telecom Network - (RD-C-8 /3)-Z3-C083-TC | 2027-09-15 → 2027-09-12 (-3d) | 2027-09-27 → 2027-09-21 (-6d) | -158.02d → -155d |
| RHD4CZ3C083TC2200 | Installation of HDPE Ducts for Telecom Network - (RD-C-8 /3)-Z3-C083-TC | 2027-09-27 → 2027-09-22 (-5d) | 2027-10-12 → 2027-10-07 (-5d) | -158.02d → -155d |
| RHD4CZ3C083TC2400 | Backfilling of HDPE Ducts for Telecom Network - (RD-C-8 /3)-Z3-C083-TC | 2027-10-12 → 2027-10-09 (-3d) | 2027-10-23 → 2027-10-18 (-5d) | -158.02d → -155d |
| 1627 | **RHD4-02-002-C083-(TC)-Telecommunications Manholes** | 2027-09-27 → 2027-09-22 (-5d) | 2027-10-04 → 2027-09-29 (-5d) |  |
| RHD4CZ3C083TC5100 | Excavation for Manholes for Telecom Network - (RD-C-8 /3)-Z3-C083-TC | 2027-09-27 → 2027-09-22 (-5d) | 2027-09-30 → 2027-09-26 (-4d) | -151.02d → -148d |
| RHD4CZ3C083TC5200 | Installation of Manholes for Telecom Network - (RD-C-8 /3)-Z3-C083-TC | 2027-09-30 → 2027-09-27 (-3d) | 2027-10-04 → 2027-09-29 (-5d) | -151.02d → -148d |
| 1629 | **RHD4-02-002-Z3-C083-Information and Communication Technologies - ICT** | 2027-09-15 → 2027-09-12 (-3d) | 2027-10-26 → 2027-10-21 (-5d) |  |
| 1630 | **RHD4-02-002-C083-(ICT)-Information and Communication Technologies Ducts** | 2027-09-15 → 2027-09-12 (-3d) | 2027-10-26 → 2027-10-21 (-5d) |  |
| RHD4CZ3C083ICT2100 | Excavation of HDPE Ducts for ICT Network - (RD-C-8 /3)-Z3-C083-ICT | 2027-09-15 → 2027-09-12 (-3d) | 2027-09-28 → 2027-09-22 (-6d) | -161.02d → -158d |
| RHD4CZ3C083ICT2200 | Installation of HDPE Ducts for ICT Network - (RD-C-8 /3)-Z3-C083-ICT | 2027-09-28 → 2027-09-25 (-3d) | 2027-10-14 → 2027-10-10 (-4d) | -161.02d → -158d |
| RHD4CZ3C083ICT2400 | Backfilling of HDPE Ducts for ICT Network - (RD-C-8 /3)-Z3-C083-ICT | 2027-10-14 → 2027-10-11 (-3d) | 2027-10-26 → 2027-10-21 (-5d) | -161.02d → -158d |

| ID | Task | Start | Finish | Complete | Total float |
| --- | --- | --- | --- | --- | --- |
| 1631 | **RHD4-02-002-C083-(ICT)-Information and Communication Technologies Manholes** | 2027-09-28 → 2027-09-25 (-3d) | 2027-10-05 → 2027-09-30 (-5d) |  |  |
| RHD4CZ3C083ICT5100 | Excavation for Manholes for ICT Network - (RD-C-8 /3)-Z3-C083-ICT | 2027-09-28 → 2027-09-25 (-3d) | 2027-10-02 → 2027-09-27 (-5d) |  | -153.02d → -150d |
| RHD4CZ3C083ICT5200 | Installation of Manholes for ICT Network - (RD-C-8 /3)-Z3-C083-ICT | 2027-10-02 → 2027-09-28 (-4d) | 2027-10-05 → 2027-09-30 (-5d) |  | -153.02d → -150d |
| 1633 | **RHD4-02-002-Z3-C083-Security Network - CCTV** | 2027-10-26 → 2027-10-23 (-3d) | 2027-12-09 → 2027-12-05 (-4d) |  |  |
| 1634 | **RHD4-02-002-C083-(CCTV)-Civil Works** | 2027-10-26 → 2027-10-23 (-3d) | 2027-11-07 → 2027-11-02 (-5d) |  |  |
| RHD4CZ3C083CCTV2100 | Civil Works for Security Network - (RD-C-8 /3)-Z3-C083-CCTV | 2027-10-26 → 2027-10-23 (-3d) | 2027-11-07 → 2027-11-02 (-5d) |  | -161.02d → -158d |
| 1635 | **RHD4-02-002-C083-(CCTV)-CCTV Poles** | 2027-11-07 → 2027-11-03 (-4d) | 2027-11-18 → 2027-11-14 (-4d) |  |  |
| RHD4CZ3C083CCTV1100 | Excavation for RC Base for CCTV Poles for Security Network - (RD-C-8 /3)-Z3-C083-CCTV | 2027-11-07 → 2027-11-03 (-4d) | 2027-11-09 → 2027-11-04 (-5d) |  | -161.02d → -158d |
| RHD4CZ3C083CCTV1200 | Installation for RC Base for CCTV Poles for Security Network - (RD-C-8 /3)-Z3-C083-CCTV | 2027-11-09 → 2027-11-06 (-3d) | 2027-11-11 → 2027-11-07 (-4d) |  | -161.02d → -158d |
| RHD4CZ3C083CCTV1300 | Backfill for RC Base for CCTV Poles for Security Network - (RD-C-8 /3)-Z3-C083-CCTV | 2027-11-11 → 2027-11-08 (-3d) | 2027-11-14 → 2027-11-09 (-5d) |  | -161.02d → -158d |
| RHD4CZ3C083CCTV1400 | Installation for CCTV Poles for Security Network - (RD-C-8 /3)-Z3-C083-CCTV | 2027-11-14 → 2027-11-10 (-4d) | 2027-11-16 → 2027-11-11 (-5d) |  | -161.02d → -158d |
| RHD4CZ3C083CCTV1500 | Protection post Installation for CCTV Poles for Security Network - (RD-C-8 /3)-Z3-C083-CCTV | 2027-11-16 → 2027-11-13 (-3d) | 2027-11-18 → 2027-11-14 (-4d) |  | -159.02d → -156d |
| 1636 | **RHD4-02-002-C083-(CCTV)-Camera** | 2027-11-18 → 2027-11-15 (-3d) | 2027-11-21 → 2027-11-16 (-5d) |  |  |
| RHD4CZ3C083CCTV3100 | Installation for Cameras for Security Network - (RD-C-8 /3)-Z3-C083-CCTV | 2027-11-18 → 2027-11-15 (-3d) | 2027-11-21 → 2027-11-16 (-5d) |  | -161.02d → -158d |
| 1637 | **RHD4-02-002-C083-(CCTV)-Power and Infrastructure** | 2027-11-16 → 2027-11-13 (-3d) | 2027-11-21 → 2027-11-16 (-5d) |  |  |
| RHD4CZ3C083CCTV4100 | Installation of Power outlet, UPS and midspan for PTZ Camerafor Cameras for Security Network - (RD-C-8 /3)-Z3-C083-CCTV | 2027-11-16 → 2027-11-13 (-3d) | 2027-11-18 → 2027-11-14 (-4d) |  | -161.02d → -158d |
| RHD4CZ3C083CCTV4200 | Short Range Wireless PoP wireless Bridgefor CCTV Poles for Security Network - (RD-C-8 /3)-Z3-C083-CCTV | 2027-11-18 → 2027-11-15 (-3d) | 2027-11-21 → 2027-11-16 (-5d) |  | -161.02d → -158d |
| 1639 | **RHD4-02-002-C083-(CCTV)-CCTV Panels and Components** | 2027-11-21 → 2027-11-17 (-4d) | 2027-12-09 → 2027-12-05 (-4d) |  |  |
| RHD4CZ3C083CCTV6100 | Installation for CCTV Panels for Security Network - (RD-C-8 /3)-Z3-C083-CCTV | 2027-11-21 → 2027-11-17 (-4d) | 2027-12-09 → 2027-12-05 (-4d) |  | -161.02d → -158d |
| 3 | **Tunnels** |  | 2027-11-10 → 2027-11-06 (-4d) |  |  |
| 4 | **Tunnel 01** |  | 2027-11-10 → 2027-11-06 (-4d) |  |  |
| 17 | **RHD4-02-002 - Tunnel 1 - Stage 02** |  | 2027-11-10 → 2027-11-06 (-4d) |  |  |
| 18 | **RHD4-02-002 - Tunnel 1 - STG 2 - Concrete Works** |  | 2027-01-25 → 2027-01-19 (-6d) |  |  |
| 21 | **RHD4-02-002 - Tunnel 1 - Concrete Works - Under Ground Walls** |  | 2027-01-07 → 2027-01-14 (+7d) |  |  |
| 24 | **RHD4-02-002 - Tunnel 1 - Under Ground Walls - Stage 3 (Up to 9m)** |  | 2027-01-07 → 2027-01-14 (+7d) |  |  |
| RHD4CTUN1Z5STG21230 | Installation of 2 layers of bitumenous waterproofing membrane<Stage 03>-TUN1-Z5-STG2-Concrete Works-Under Ground Walls | 2027-01-02 → 2026-11-10 A (-53d) | 2027-01-05 → 2027-01-12 (+7d) | 0% → 85% | -135d → -126d |
| RHD4CTUN1Z5STG21240 | Installation of Protection board for waterproofing <Stage 03>-TUN1-Z5-STG2-Concrete Works-Under Ground Walls | 2027-01-06 → 2026-11-12 A (-55d) | 2027-01-07 → 2027-01-14 (+7d) | 0% → 70% | -135d → -126d |
| 25 | **RHD4-02-002 - Tunnel 1 - Concrete Works - Slab** |  | 2027-01-20 → 2026-11-10 (-71d) |  |  |
| RHD4CTUN1Z5STG21280 | De-shuttering and Curing Works for Beams And Slab-TUN1-Z5-STG2-Concrete Works-Slab |  | 2027-01-20 → 2026-11-10 A (-71d) | 50% → 100% | -128d → none |
| 27 | **RDH4-01-001 - Tunnel 1 - Painting Works - Finishing** | 2027-01-21 → 2027-01-15 (-6d) | 2027-01-25 → 2027-01-19 (-6d) |  |  |
| RHD4CTUN1Z5STG21900 | Tunnel Painting-TUN1-Z5-STG2-Painting Works-Finishing | 2027-01-21 → 2027-01-15 (-6d) | 2027-01-25 → 2027-01-19 (-6d) |  | -97d → -91d |
| 27 | **RHD4-02-002 - Tunnel 1 - STG 2 - MEP Works** | 2027-07-15 → 2027-07-12 (-3d) | 2027-11-10 → 2027-11-06 (-4d) |  |  |
| 28 | **RHD4-02-002 - Tunnel 1 - MEP Works - Electrical Works** | 2027-07-15 → 2027-07-12 (-3d) | 2027-11-10 → 2027-11-06 (-4d) |  |  |
| 29 | **RHD4-02-002 - Tunnel 1 - Electrical Works - Low Voltage** | 2027-07-15 → 2027-07-12 (-3d) | 2027-11-10 → 2027-11-06 (-4d) |  |  |
| RHD4CTUN1Z5STG21330 | Marking, Cutting & Chasing and Putting LV Conduits in Walls-TUN1-Z5-STG2-MEP Works-Electrical Works | 2027-07-15 → 2027-07-12 (-3d) | 2027-07-20 → 2027-07-15 (-5d) |  | -153.02d → -150d |
| RHD4CTUN1Z5STG21340 | Hanger & Support Installation for LV System-TUN1-Z5-STG2-MEP Works-Electrical Works | 2027-07-20 → 2027-07-17 (-3d) | 2027-08-08 → 2027-08-03 (-5d) |  | -153.02d → -150d |
| RHD4CTUN1Z5STG21350 | Cable Tray Installation for LV System-TUN1-Z5-STG2-MEP Works-Electrical Works | 2027-08-08 → 2027-08-04 (-4d) | 2027-08-26 → 2027-08-22 (-4d) |  | -153.02d → -150d |
| RHD4CTUN1Z5STG21360 | Exposed LV Conduits Installation-TUN1-Z5-STG2-MEP Works-Electrical Works | 2027-08-26 → 2027-08-23 (-3d) | 2027-09-14 → 2027-09-09 (-5d) |  | -142.02d → -139d |
| RHD4CTUN1Z5STG21370 | Pulling Cables & Wires for LV Systems-TUN1-Z5-STG2-MEP Works-Electrical Works | 2027-09-14 → 2027-09-11 (-3d) | 2027-10-04 → 2027-09-29 (-5d) |  | -142.02d → -139d |
| RHD4CTUN1Z5STG21390 | Wiring Devices Installation for LV System -TUN1-Z5-STG2-MEP Works-Electrical Works | 2027-10-04 → 2027-09-30 (-4d) | 2027-10-23 → 2027-10-18 (-5d) |  | -142.02d → -139d |
| RHD4CTUN1Z5STG21380 | Lighting Fixtures Installation-TUN1-Z5-STG2-MEP Works-Electrical Works | 2027-10-23 → 2027-10-19 (-4d) | 2027-11-10 → 2027-11-06 (-4d) |  | -136.02d → -133d |
| 30 | **RHD4-02-002 - Tunnel 1 - Electrical Works - Light Current** | 2027-08-26 → 2027-08-23 (-3d) | 2027-10-13 → 2027-10-09 (-4d) |  |  |
| RHD4CTUN1Z5STG21400 | Marking, Cutting & Chasing and Putting LC Conduits-TUN1-Z5-STG2-MEP Works-Electrical Works | 2027-08-26 → 2027-08-23 (-3d) | 2027-09-04 → 2027-08-30 (-5d) |  | -153.02d → -150d |
| RHD4CTUN1Z5STG21410 | Hanger & Support Installation for LC System-TUN1-Z5-STG2-MEP Works-Electrical Works | 2027-09-04 → 2027-08-31 (-4d) | 2027-09-12 → 2027-09-07 (-5d) |  | -153.02d → -150d |
| RHD4CTUN1Z5STG21420 | Cable Trunk Installation for LC System-TUN1-Z5-STG2-MEP Works-Electrical Works | 2027-09-12 → 2027-09-08 (-4d) | 2027-09-20 → 2027-09-15 (-5d) |  | -153.02d → -150d |
| RHD4CTUN1Z5STG21430 | Exposed LC Conduits Installation-TUN1-Z5-STG2-MEP Works-Electrical Works | 2027-09-20 → 2027-09-16 (-4d) | 2027-09-29 → 2027-09-25 (-4d) |  | -153.02d → -150d |
| RHD4CTUN1Z5STG21440 | Pulling Cables for lighting control system (DALI)-TUN1-Z5-STG2-MEP Works-Electrical Works | 2027-09-29 → 2027-09-26 (-3d) | 2027-10-03 → 2027-09-28 (-5d) |  | -153.02d → -150d |
| RHD4CTUN1Z5STG21450 | Pulling Cables for Fire Alarm System-TUN1-Z5-STG2-MEP Works-Electrical Works | 2027-09-29 → 2027-09-26 (-3d) | 2027-10-03 → 2027-09-28 (-5d) |  | -150.02d → -147d |
| RHD4CTUN1Z5STG21460 | Pulling Cables for IP CCTV-TUN1-Z5-STG2-MEP Works-Electrical Works | 2027-09-29 → 2027-09-26 (-3d) | 2027-10-04 → 2027-09-29 (-5d) |  | -148.02d → -145d |
| RHD4CTUN1Z5STG21470 | lighting control system (DALI) Devices Installation -TUN1-Z5-STG2-MEP Works-Electrical Works | 2027-10-03 → 2027-09-29 (-4d) | 2027-10-06 → 2027-10-02 (-4d) |  | -153.02d → -150d |
| RHD4CTUN1Z5STG21480 | Fire Alarm Devices Installation-TUN1-Z5-STG2-MEP Works-Electrical Works | 2027-10-06 → 2027-10-03 (-3d) | 2027-10-10 → 2027-10-05 (-5d) |  | -153.02d → -150d |
| RHD4CTUN1Z5STG21490 | IP CCTV Devices Installation-TUN1-Z5-STG2-MEP Works-Electrical Works | 2027-10-10 → 2027-10-06 (-4d) | 2027-10-13 → 2027-10-09 (-4d) |  | -153.02d → -150d |
| 31 | **RHD4-02-002 - Tunnel 1 - Stage 03** |  | 2027-04-10 → 2027-03-22 (-19d) |  |  |
| 32 | **RHD4-02-002 - Tunnel 1 - STG 3 - Concrete works** |  | 2027-04-10 → 2027-03-22 (-19d) |  |  |
| 35 | **RHD4-02-002 - Tunnel 1 - Concrete works - Under Ground Walls** |  | 2027-04-10 → 2027-03-22 (-19d) |  |  |
| 38 | **RHD4-02-002 - Tunnel 1 - Under Ground Walls - Stage 3 (Up to 9m)** |  | 2027-04-10 → 2027-03-22 (-19d) |  |  |
| RHD4CTUN1Z5STG31210 | casting of reinforced concrete for Walls <Stage 03>-TUN1-Z5-STG3-Concrete works -Under Ground Walls |  | 2027-01-12 → 2026-11-10 A (-63d) | 90% → 100% | -84d → none |
| RHD4CTUN1Z5STG31220 | De-shuttering and Curing Works for Walls <Stage 03>-TUN1-Z5-STG3-Concrete works -Under Ground Walls |  | 2027-01-17 → 2026-11-11 A (-67d) | 70% → 100% | -84d → none |
| RHD4CTUN1Z5STG31230 | Installation of 2 layers of 4mm bitumenous waterproofing membrane <Stage 03>-TUN1-Z5-STG3-Concrete works -Under Ground W |  | 2027-03-31 → 2027-03-13 (-18d) |  | -135d → -119d |
| RHD4CTUN1Z5STG31240 | Installation of Protection board for waterproofing <Stage 03>-TUN1-Z5-STG3-Concrete works -Under Ground Walls |  | 2027-04-10 → 2027-03-22 (-19d) |  | -135d → -119d |
| 5 | **RHD4-02-002 - Tunnel 1 - Stage 01** |  | 2027-03-30 → 2027-03-08 (-22d) |  |  |
| 6 | **RHD4-02-002 - Tunnel 1 - STG 1 - Concrete Works** |  | 2027-03-30 → 2027-03-08 (-22d) |  |  |
| 7 | **RHD4-02-002 - Tunnel 1 - Concrete Works - PC Foundation** |  | 2027-01-17 → 2026-11-14 (-64d) |  |  |
| RHD4CTUN1Z5STG11000 | PC Footing Shuttering Works -TUN1-Z5-STG1-Concrete Works-PC Foundation |  | 2027-01-10 → 2026-11-10 A (-61d) | 50% → 100% | -135d → none |
| RHD4CTUN1Z5STG11010 | Casting of 100mm Blinding Concrete Under Foundation-TUN1-Z5-STG1-Concrete Works-PC Foundation |  | 2027-01-12 → 2026-11-11 A (-62d) | 50% → 100% | -135d → none |
| RHD4CTUN1Z5STG11020 | Applying 2 layers of waterproofing bitumenous membrane 4mm below footings-TUN1-Z5-STG1-Concrete Works-PC Foundation |  | 2027-01-14 → 2026-11-13 A (-62d) | 50% → 100% | -135d → none |
| RHD4CTUN1Z5STG11030 | Casting of 50mm Screed for Membrane Protection-TUN1-Z5-STG1-Concrete Works-PC Foundation |  | 2027-01-17 → 2026-11-14 A (-64d) | 50% → 100% | -135d → none |
| 8 | **RHD4-02-002 - Tunnel 1 - Concrete Works - RC Foundation** |  | 2027-02-06 → 2027-02-04 (-2d) |  |  |
| RHD4CTUN1Z5STG11040 | Shuttering Works for RC Footing-TUN1-Z5-STG1-Concrete Works-RC Foundation |  | 2027-01-21 → 2027-01-19 (-2d) |  | -135d → -118d |
| RHD4CTUN1Z5STG11050 | Steel fixing Works for RC Footing -TUN1-Z5-STG1-Concrete Works-RC Foundation |  | 2027-01-27 → 2027-01-25 (-2d) |  | -135d → -118d |

| ID | Task | Start | Finish | Complete | Total float |
| --- | --- | --- | --- | --- | --- |
| RHD4CTUN1Z5STG11060 | casting of reinforced concrete for RC Footing -TUN1-Z5-STG1-Concrete Works-RC Foundation |  | 2027-02-01 → 2027-01-30 (-2d) |  | -135d → -118d |
| RHD4CTUN1Z5STG11070 | De-shuttering and Curing Works for RC Footing -TUN1-Z5-STG1-Concrete Works-RC Foundation |  | 2027-02-06 → 2027-02-04 (-2d) |  | -159d → -139d |
| 9 | **RHD4-02-002 - Tunnel 1 - Concrete Works - Under Ground Walls** |  | 2027-03-30 → 2027-03-08 (-22d) |  |  |
| 10 | **RHD4-02-002 - Tunnel 1 - Under Ground Walls - Stage 1 (Up to 3m)** |  | 2027-02-24 → 2026-11-15 (-101d) |  |  |
| RHD4CTUN1Z5STG11080 | shuttering Works of Three Sides for Walls <Stage 01>-TUN1-Z5-STG1-Concrete Works-Under Ground Walls |  | 2027-02-08 → 2026-11-10 A (-90d) | 50% → 100% | -135d → none |
| RHD4CTUN1Z5STG11090 | Steel fixing Works for Walls <Stage 01>-TUN1-Z5-STG1-Concrete Works-Under Ground Walls |  | 2027-02-10 → 2026-11-11 A (-91d) | 50% → 100% | -135d → none |
| RHD4CTUN1Z5STG11100 | shuttering Works of the 4th Side for Walls <Stage 01>-TUN1-Z5-STG1-Concrete Works-Under Ground Walls |  | 2027-02-15 → 2026-11-12 A (-95d) | 50% → 100% | -135d → none |
| RHD4CTUN1Z5STG11110 | casting of reinforced concrete for Walls <Stage 01>-TUN1-Z5-STG1-Concrete Works-Under Ground Walls |  | 2027-02-20 → 2026-11-14 A (-98d) | 50% → 100% | -135d → none |
| RHD4CTUN1Z5STG11120 | De-shuttering and Curing Works for Walls <Stage 01>-TUN1-Z5-STG1-Concrete Works-Under Ground Walls | 2027-02-21 → 2026-11-10 A (-103d) | 2027-02-24 → 2026-11-15 A (-101d) | 0% → 100% | -159d → none |
| 11 | **RHD4-02-002 - Tunnel 1 - Under Ground Walls - Stage 2 (Up to 6m)** | 2027-02-25 → 2026-11-10 (-107d) | 2027-03-22 → 2027-02-28 (-22d) |  |  |
| RHD4CTUN1Z5STG11130 | shuttering Works of Three Sides for Walls <Stage 02>-TUN1-Z5-STG1-Concrete Works-Under Ground Walls | 2027-02-25 → 2026-11-10 A (-107d) | 2027-03-01 → 2027-02-09 (-20d) | 0% → 50% | -135d → -119d |
| RHD4CTUN1Z5STG11140 | Steel fixing Works for Walls <Stage 02>-TUN1-Z5-STG1-Concrete Works-Under Ground Walls | 2027-03-02 → 2026-11-11 A (-111d) | 2027-03-06 → 2027-02-14 (-20d) | 0% → 50% | -135d → -119d |
| RHD4CTUN1Z5STG11150 | shuttering Works of the 4th Side for Walls <Stage 02>-TUN1-Z5-STG1-Concrete Works-Under Ground Walls | 2027-03-07 → 2026-11-12 A (-115d) | 2027-03-14 → 2027-02-18 (-24d) | 0% → 50% | -135d → -119d |
| RHD4CTUN1Z5STG11160 | casting of reinforced concrete for Walls <Stage 02>-TUN1-Z5-STG1-Concrete Works-Under Ground Walls | 2027-03-15 → 2026-11-14 A (-121d) | 2027-03-18 → 2027-02-24 (-22d) | 0% → 50% | -135d → -119d |
| RHD4CTUN1Z5STG11170 | De-shuttering and Curing Works for Walls <Stage 02>-TUN1-Z5-STG1-Concrete Works-Under Ground Walls | 2027-03-19 → 2027-02-25 (-22d) | 2027-03-22 → 2027-02-28 (-22d) |  | -162d → -140d |
| 12 | **RHD4-02-002 - Tunnel 1 - Under Ground Walls - Stage 3 (Up to 9m)** | 2027-02-25 → 2027-02-06 (-19d) | 2027-03-30 → 2027-03-08 (-22d) |  |  |
| RHD4CTUN1Z5STG11180 | shuttering Works of Three Sides for Walls <Stage 03>-TUN1-Z5-STG1-Concrete Works-Under Ground Walls | 2027-02-25 → 2027-02-06 (-19d) | 2027-03-01 → 2027-02-09 (-20d) |  | -134d → -118d |
| RHD4CTUN1Z5STG11190 | Steel fixing Works for Walls <Stage 03>-TUN1-Z5-STG1-Concrete Works-Under Ground Walls | 2027-03-02 → 2027-02-10 (-20d) | 2027-03-06 → 2027-02-14 (-20d) |  | -134d → -118d |
| RHD4CTUN1Z5STG11200 | shuttering Works of the 4th Side for Walls <Stage 03>-TUN1-Z5-STG1-Concrete Works-Under Ground Walls | 2027-03-07 → 2027-02-15 (-20d) | 2027-03-14 → 2027-02-18 (-24d) |  | -134d → -118d |
| RHD4CTUN1Z5STG11210 | casting of reinforced concrete for Walls <Stage 03>-TUN1-Z5-STG1-Concrete Works-Under Ground Walls | 2027-03-15 → 2027-02-20 (-23d) | 2027-03-17 → 2027-02-23 (-22d) |  | -134d → -118d |
| RHD4CTUN1Z5STG11220 | De-shuttering and Curing Works for Walls <Stage 03>-TUN1-Z5-STG1-Concrete Works-Under Ground Walls | 2027-03-18 → 2027-02-24 (-22d) | 2027-03-21 → 2027-02-27 (-22d) |  | -161d → -139d |
| RHD4CTUN1Z5STG11230 | Installation of 2 layers of bitumenous waterproofing membrane<Stage 03>-TUN1-Z5-STG1-Concrete Works-Under Ground Walls | 2027-03-22 → 2027-02-28 (-22d) | 2027-03-25 → 2027-03-03 (-22d) |  | -134d → -118d |
| RHD4CTUN1Z5STG11240 | Installation of Protection board for waterproofing <Stage 03>-TUN1-Z5-STG1-Concrete Works-Under Ground Walls | 2027-03-27 → 2027-03-04 (-23d) | 2027-03-30 → 2027-03-08 (-22d) |  | -134d → -118d |
| 1 | **Stations** |  | 2028-04-30 → 2028-04-27 (-3d) |  |  |
| 160 | **Storm Lift Station 01** |  | 2028-04-30 → 2028-04-27 (-3d) |  |  |
| 161 | **RHD4-02-002-Storm Lift Station 01-Wet Well Structure And Valve Chamber** |  | 2027-09-06 → 2027-09-01 (-5d) |  |  |
| 162 | **RHD4-02-002-STL1-Wet Well** |  | 2027-09-06 → 2027-09-01 (-5d) |  |  |
| 163 | **RHD4-02-002-STL1-B07-Concrete works Wet Well** |  | 2027-06-14 → 2027-06-09 (-5d) |  |  |
| RHD4CSTL1B07D021002 | Water proofing membrance for Wet well structure - (B7.07 13 13.01)-STL1-B07-D02 | 2027-05-22 → 2027-05-13 (-9d) | 2027-05-31 → 2027-05-26 (-5d) |  | -144.02d → -141d |
| RHD4CSTL1B07D021003 | Screed for Wet well structurefor Wet Well - (B7.03 00 00 .04)-STL1-B07-D02 | 2027-05-31 → 2027-05-27 (-4d) | 2027-06-03 → 2027-05-30 (-4d) |  | -144.02d → -141d |
| RHD4CSTL1B07D021004 | Steel Fixing foundations for Wet well structure - (B7.03 00 00 .05)-STL1-B07-D02 | 2027-06-03 → 2027-05-31 (-3d) | 2027-06-08 → 2027-06-03 (-5d) |  | -144.02d → -141d |
| RHD4CSTL1B07D021005 | Formwork foundations for Wet well structure - (B7.03 00 00 .05)-STL1-B07-D02 | 2027-06-08 → 2027-06-05 (-3d) | 2027-06-10 → 2027-06-06 (-4d) |  | -144.02d → -141d |
| RHD4CSTL1B07D021006 | RC Casting foundations for Wet well structure - (B7.03 00 00 .05)-STL1-B07-D02 | 2027-06-10 → 2027-06-07 (-3d) | 2027-06-14 → 2027-06-09 (-5d) |  | -144.02d → -141d |
| 164 | **RHD4-02-002-STL1-B07-Valve Chamber** | 2027-06-14 → 2027-06-10 (-4d) | 2027-07-04 → 2027-06-29 (-5d) |  |  |
| RHD4CSTL1B07D021008 | Water proofing membrance for Wet well structure - (B7.07 13 13.01)-STL1-B07-D02 | 2027-06-14 → 2027-06-10 (-4d) | 2027-06-19 → 2027-06-14 (-5d) |  | -144.02d → -141d |
| RHD4CSTL1B07D021009 | Screed for Wet well structure - (B7.03 00 00 .04)-STL1-B07-D02 | 2027-06-19 → 2027-06-15 (-4d) | 2027-06-22 → 2027-06-17 (-5d) |  | -144.02d → -141d |
| RHD4CSTL1B07D021010 | Steel Fixing foundations for Wet well structure - (B7.03 00 00 .05)-STL1-B07-D02 | 2027-06-22 → 2027-06-19 (-3d) | 2027-06-27 → 2027-06-22 (-5d) |  | -144.02d → -141d |
| RHD4CSTL1B07D021011 | Formwork foundations for Wet well structure - (B7.03 00 00 .05)-STL1-B07-D02 | 2027-06-27 → 2027-06-23 (-4d) | 2027-07-01 → 2027-06-27 (-4d) |  | -144.02d → -141d |
| RHD4CSTL1B07D021012 | RC Casting foundations for Wet well structure - (B7.03 00 00 .05)-STL1-B07-D02 | 2027-07-01 → 2027-06-28 (-3d) | 2027-07-04 → 2027-06-29 (-5d) |  | -144.02d → -141d |
| 165 | **RHD4-02-002-STL1-B07-Retaining Walls & Slab** | 2027-07-04 → 2027-06-30 (-4d) | 2027-07-24 → 2027-07-19 (-5d) |  |  |
| RHD4CSTL1B07D021013 | Steel Fixing for Wet well structure - (B7.03 00 00 .07)-STL1-B07-D02 | 2027-07-04 → 2027-06-30 (-4d) | 2027-07-10 → 2027-07-05 (-5d) |  | -143.02d → -140d |
| RHD4CSTL1B07D021014 | Formwork for Wet well structure - (B7.03 00 00 .07)-STL1-B07-D02 | 2027-07-10 → 2027-07-06 (-4d) | 2027-07-14 → 2027-07-10 (-4d) |  | -143.02d → -140d |
| RHD4CSTL1B07D021015 | RC Casting for Wet well structure - (B7.03 00 00 .07)-STL1-B07-D02 | 2027-07-14 → 2027-07-11 (-3d) | 2027-07-19 → 2027-07-14 (-5d) |  | -143.02d → -140d |
| RHD4CSTL1B07D021016 | Water protection Board membrance for Wet well structure - (B7.07 13 13.02)-STL1-B07-D02 | 2027-07-19 → 2027-07-15 (-4d) | 2027-07-24 → 2027-07-19 (-5d) |  | -143.02d → -140d |
| 166 | **RHD4-02-002-STL1-B07-Finishes** | 2027-07-24 → 2027-07-20 (-4d) | 2027-08-03 → 2027-07-29 (-5d) |  |  |
| RHD4CSTL1B07D091017 | Epoxy Coating for Wet well structure - (B7.09 96 56.01)-STL1-B07-D09 | 2027-07-24 → 2027-07-20 (-4d) | 2027-07-28 → 2027-07-24 (-4d) |  | -143.02d → -140d |
| RHD4CSTL1B07D091018 | External Plastering for walls 20mm - (B7.09 24 00.02)-STL1-B07-D09 | 2027-07-28 → 2027-07-25 (-3d) | 2027-08-03 → 2027-07-29 (-5d) |  | -143.02d → -140d |
| 167 | **RHD4-02-002-STL1-B07-Metal Doors** | 2027-08-03 → 2027-07-31 (-3d) | 2027-08-09 → 2027-08-04 (-5d) |  |  |
| RHD4CSTL1B07D051022 | metal floor door size (1000x1000mm) for Wet well structure - (B7.08 31 13.04)-STL1-B07-D05 | 2027-08-03 → 2027-07-31 (-3d) | 2027-08-09 → 2027-08-04 (-5d) |  | -143.02d → -140d |
| 168 | **RHD4-02-002-STL1-B07-Screening Container** | 2027-08-09 → 2027-08-05 (-4d) | 2027-08-12 → 2027-08-08 (-4d) |  |  |
| RHD4CSTL1B07D151023 | Steel Container Screening Installation - (B7.46 21 00.01)-STL1-B07-D15 | 2027-08-09 → 2027-08-05 (-4d) | 2027-08-12 → 2027-08-08 (-4d) |  | -143.02d → -140d |
| 169 | **RHD4-02-002-STL1-B07-Motorized basket screen** | 2027-08-12 → 2027-08-09 (-3d) | 2027-09-01 → 2027-08-28 (-4d) |  |  |
| RHD4CSTL1B07D151024 | Basket Screen Frame Mounting - (B7.46 21 00.011)-STL1-B07-D15 | 2027-08-12 → 2027-08-09 (-3d) | 2027-08-18 → 2027-08-14 (-4d) |  | -143.02d → -140d |
| RHD4CSTL1B07D151025 | Basket Screen Alignment - (B7.46 21 00.011)-STL1-B07-D15 | 2027-08-18 → 2027-08-15 (-3d) | 2027-08-25 → 2027-08-21 (-4d) |  | -143.02d → -140d |
| RHD4CSTL1B07D151026 | Motor and Drive System Installation - (B7.46 21 00.011)-STL1-B07-D15 | 2027-08-25 → 2027-08-22 (-3d) | 2027-09-01 → 2027-08-28 (-4d) |  | -143.02d → -140d |
| 170 | **RHD4-02-002-STL1-B07-Pumps** | 2027-09-01 → 2027-08-29 (-3d) | 2027-09-06 → 2027-09-01 (-5d) |  |  |
| RHD4CSTL1B07D151027 | Constant Speed Submersible pump Installation - 20 lps - (B7. 22 14 29.16.03)-STL1-B07-D15 | 2027-09-01 → 2027-08-29 (-3d) | 2027-09-06 → 2027-09-01 (-5d) |  | -143.02d → -140d |
| 171 | **RHD4-02-002-STL1-B07-Gate Valves** | 2027-07-04 → 2027-06-30 (-4d) | 2027-07-11 → 2027-07-06 (-5d) |  |  |
| RHD4CSTL1B07D151029 | Manually operated Gate Valve DN150 for - (B7.22 05 23.03)-STL1-B07-D15 | 2027-07-04 → 2027-06-30 (-4d) | 2027-07-11 → 2027-07-06 (-5d) |  | -144.02d → -141d |
| 172 | **RHD4-02-002-STL1-B07-Non-Return Valve** | 2027-07-11 → 2027-07-07 (-4d) | 2027-07-18 → 2027-07-13 (-5d) |  |  |
| RHD4CSTL1B07D151030 | Check Valve with diameter 150mm. 150mm - (B7.22 05 24.03)-STL1-B07-D15 | 2027-07-11 → 2027-07-07 (-4d) | 2027-07-18 → 2027-07-13 (-5d) |  | -144.02d → -141d |
| 173 | **RHD4-02-002-STL1-Pump Lifting System** | 2027-07-18 → 2027-07-14 (-4d) | 2027-08-07 → 2027-08-02 (-5d) |  |  |
| 174 | **RHD4-02-002-STL1-Ductile Pipes & Fittings** | 2027-07-18 → 2027-07-14 (-4d) | 2027-08-01 → 2027-07-27 (-5d) |  |  |
| RHD4CSTL1B07D151031 | Buried ductile iron pipes with diameter 150 mm - (B7.22 11 13.07)-STL1-B07-D15 | 2027-07-18 → 2027-07-14 (-4d) | 2027-07-25 → 2027-07-20 (-5d) |  | -144.02d → -141d |
| RHD4CSTL1B07D151032 | Double flanged ductile iron pipe with diameter 150 mm - (B7.22 11 13.08)-STL1-B07-D15 | 2027-07-25 → 2027-07-21 (-4d) | 2027-08-01 → 2027-07-27 (-5d) |  | -144.02d → -141d |
| 175 | **RHD4-02-002-STL1-JIB Crane** | 2027-08-01 → 2027-07-28 (-4d) | 2027-08-07 → 2027-08-02 (-5d) |  |  |
| RHD4CSTL1B07D151033 | Install JIB Crane For storm and sewer pumping Stations - (B7.41 22 10.01)-STL1-B07-D15 | 2027-08-01 → 2027-07-28 (-4d) | 2027-08-07 → 2027-08-02 (-5d) |  | -144.02d → -141d |
| 176 | **RHD4-02-002-Storm Lift Station 01-Electrical Room** |  | 2028-04-11 → 2028-04-09 (-2d) |  |  |
| 177 | **RHD4-02-002-STL1-Sub Structure** |  | 2027-10-31 → 2027-10-26 (-5d) |  |  |
| 178 | **RHD4-02-002-STL1-Plain Concrete** |  | 2027-05-31 → 2027-05-26 (-5d) |  |  |

| ID | Task | Start | Finish | Total float |
| --- | --- | --- | --- | --- |
| RHD4CSTL1B07D031036 | Water proofing membrance Plain Concrete - (B7.07 13 13.01)-STL1-B07-D03 | 2027-05-22 → 2027-05-13 (-9d) | 2027-05-27 → 2027-05-23 (-4d) | -123.02d → -120d |
| RHD4CSTL1B07D031037 | Screeding Plain Concrete - (B7.03 00 00 .04)-STL1-B07-D03 | 2027-05-27 → 2027-05-24 (-3d) | 2027-05-31 → 2027-05-26 (-5d) | -123.02d → -120d |
| 179 | **RHD4-02-002-STL1-Footing / Foundation** | 2027-05-31 → 2027-05-27 (-4d) | 2027-06-14 → 2027-06-09 (-5d) |  |
| RHD4CSTL1B07D031038 | Shuttering Foundation - (B7.03 00 00 .05)-STL1-B07-D03 | 2027-05-31 → 2027-05-27 (-4d) | 2027-06-03 → 2027-05-30 (-4d) | -123.02d → -120d |
| RHD4CSTL1B07D031039 | Steel Fixing Foundation - (B7.03 00 00 .05)-STL1-B07-D03 | 2027-06-03 → 2027-05-31 (-3d) | 2027-06-08 → 2027-06-03 (-5d) | -123.02d → -120d |
| RHD4CSTL1B07D031040 | RC Casting Foundation - (B7.03 00 00 .05)-STL1-B07-D03 | 2027-06-08 → 2027-06-05 (-3d) | 2027-06-12 → 2027-06-07 (-5d) | -123.02d → -120d |
| RHD4CSTL1B07D031041 | Deshuttering Foundation - (B7.03 00 00 .05)-STL1-B07-D03 | 2027-06-12 → 2027-06-08 (-4d) | 2027-06-14 → 2027-06-09 (-5d) | -123.02d → -120d |
| 180 | **RHD4-02-002-STL1-Neck Columns** | 2027-06-14 → 2027-06-10 (-4d) | 2027-07-03 → 2027-06-28 (-5d) |  |
| RHD4CSTL1B07D031042 | Steel Fixing Neck Columns - (B7.03 00 00 .06)-STL1-B07-D03 | 2027-06-14 → 2027-06-10 (-4d) | 2027-06-19 → 2027-06-14 (-5d) | -123.02d → -120d |
| RHD4CSTL1B07D031043 | Shuttering Neck Columns - (B7.03 00 00 .06)-STL1-B07-D03 | 2027-06-19 → 2027-06-15 (-4d) | 2027-06-22 → 2027-06-17 (-5d) | -123.02d → -120d |
| RHD4CSTL1B07D031044 | RC Casting Neck Columns - (B7.03 00 00 .06)-STL1-B07-D03 | 2027-06-22 → 2027-06-19 (-3d) | 2027-06-27 → 2027-06-22 (-5d) | -123.02d → -120d |
| RHD4CSTL1B07D031045 | Deshuttering Neck Columns - (B7.03 00 00 .06)-STL1-B07-D03 | 2027-06-27 → 2027-06-23 (-4d) | 2027-07-03 → 2027-06-28 (-5d) | -123.02d → -120d |
| 181 | **RHD4-02-002-STL1-Ground Beams** | 2027-07-03 → 2027-06-29 (-4d) | 2027-08-12 → 2027-08-08 (-4d) |  |
| RHD4CSTL1B07D031046 | Steel Fixing Ground Beams - (B7.03 00 00 .08)-STL1-B07-D03 | 2027-07-03 → 2027-06-29 (-4d) | 2027-07-08 → 2027-07-04 (-4d) | -123.02d → -120d |
| RHD4CSTL1B07D031047 | Shuttering Ground Beams - (B7.03 00 00 .08)-STL1-B07-D03 | 2027-07-08 → 2027-07-05 (-3d) | 2027-07-13 → 2027-07-08 (-5d) | -123.02d → -120d |
| RHD4CSTL1B07D031048 | RC Casting Ground Beams - (B7.03 00 00 .08)-STL1-B07-D03 | 2027-08-07 → 2027-08-03 (-4d) | 2027-08-09 → 2027-08-04 (-5d) | -144.02d → -141d |
| RHD4CSTL1B07D031049 | Deshuttering Ground Beams - (B7.03 00 00 .08)-STL1-B07-D03 | 2027-08-09 → 2027-08-05 (-4d) | 2027-08-12 → 2027-08-08 (-4d) | -144.02d → -141d |
| 182 | **RHD4-02-002-STL1-Aggregate base Course** | 2027-08-12 → 2027-08-09 (-3d) | 2027-08-21 → 2027-08-16 (-5d) |  |
| RHD4CSTL1B07D031050 | Laying Aggregate base course Slab on Grade - (B7.32 11 23.01)-STL1-B07-D03 | 2027-08-12 → 2027-08-09 (-3d) | 2027-08-18 → 2027-08-14 (-4d) | -144.02d → -141d |
| RHD4CSTL1B07D031051 | Compaction of aggregate base course Slab on Grade - (B7.32 11 23.01)-STL1-B07-D03 | 2027-08-18 → 2027-08-15 (-3d) | 2027-08-21 → 2027-08-16 (-5d) | -144.02d → -141d |
| 183 | **RHD4-02-002-STL1-Slab on Grade** | 2027-08-21 → 2027-08-17 (-4d) | 2027-09-09 → 2027-09-05 (-4d) |  |
| RHD4CSTL1B07D031052 | Screeding for SOG works Slab on Grade - (B7.03 00 00 .02)-STL1-B07-D03 | 2027-08-21 → 2027-08-17 (-4d) | 2027-08-25 → 2027-08-21 (-4d) | -144.02d → -141d |
| RHD4CSTL1B07D031053 | Shuttering Slab on Grade - (B7.03 00 00 .09)-STL1-B07-D03 | 2027-08-25 → 2027-08-22 (-3d) | 2027-08-31 → 2027-08-26 (-5d) | -144.02d → -141d |
| RHD4CSTL1B07D031054 | Steel Fixing Slab on Grade - (B7.03 00 00 .09)-STL1-B07-D03 | 2027-08-31 → 2027-08-28 (-3d) | 2027-09-04 → 2027-08-30 (-5d) | -144.02d → -141d |
| RHD4CSTL1B07D031055 | RC Casting Slab on Grade - (B7.03 00 00 .09)-STL1-B07-D03 | 2027-09-04 → 2027-08-31 (-4d) | 2027-09-07 → 2027-09-02 (-5d) | -144.02d → -141d |
| RHD4CSTL1B07D031056 | Deshuttering Slab on Grade - (B7.03 00 00 .09)-STL1-B07-D03 | 2027-09-07 → 2027-09-04 (-3d) | 2027-09-09 → 2027-09-05 (-4d) | -144.02d → -141d |
| 184 | **RHD4-02-002-STL1-Waterproofing** | 2027-09-09 → 2027-09-06 (-3d) | 2027-09-18 → 2027-09-13 (-5d) |  |
| RHD4CSTL1B07D071057 | 2 coats of bitumen on footings Slab on Grade - (B7.07 14 00.01)-STL1-B07-D07 | 2027-09-09 → 2027-09-06 (-3d) | 2027-09-13 → 2027-09-08 (-5d) | -144.02d → -141d |
| RHD4CSTL1B07D071058 | 2 coats of bitumen on Grade Beams and SOW Slab on Grade - (B7.07 14 00.01)-STL1-B07-D07 | 2027-09-13 → 2027-09-09 (-4d) | 2027-09-18 → 2027-09-13 (-5d) | -144.02d → -141d |
| 185 | **RHD4-02-002-STL1-Vapor Retarders** | 2027-09-18 → 2027-09-14 (-4d) | 2027-09-22 → 2027-09-18 (-4d) |  |
| RHD4CSTL1B07D071059 | 250 micron Polyethylene sheet Slab on Grade - (B7.07 26 16.01)-STL1-B07-D07 | 2027-09-18 → 2027-09-14 (-4d) | 2027-09-22 → 2027-09-18 (-4d) | -144.02d → -141d |
| 186 | **RHD4-02-002-STL1-Columns** | 2027-09-22 → 2027-09-19 (-3d) | 2027-10-06 → 2027-10-02 (-4d) |  |
| RHD4CSTL1B07D031060 | Shuttering Columns - (B7.03 00 00 .13)-STL1-B07-D03 | 2027-09-22 → 2027-09-19 (-3d) | 2027-09-26 → 2027-09-20 (-6d) | -144.02d → -141d |
| RHD4CSTL1B07D031061 | Steel Fixing Columns - (B7.03 00 00 .13)-STL1-B07-D03 | 2027-09-26 → 2027-09-21 (-5d) | 2027-09-30 → 2027-09-26 (-4d) | -144.02d → -141d |
| RHD4CSTL1B07D031062 | RC Casting Columns - (B7.03 00 00 .13)-STL1-B07-D03 | 2027-09-30 → 2027-09-27 (-3d) | 2027-10-03 → 2027-09-28 (-5d) | -144.02d → -141d |
| RHD4CSTL1B07D031063 | Deshuttering Columns - (B7.03 00 00 .13)-STL1-B07-D03 | 2027-10-03 → 2027-09-29 (-4d) | 2027-10-06 → 2027-10-02 (-4d) | -144.02d → -141d |
| 187 | **RHD4-02-002-STL1-Slab Beams** | 2027-10-06 → 2027-10-03 (-3d) | 2027-10-19 → 2027-10-14 (-5d) |  |
| RHD4CSTL1B07D031064 | Shuttering Roof Slab - (B7.03 00 00 .14)-STL1-B07-D03 | 2027-10-06 → 2027-10-03 (-3d) | 2027-10-11 → 2027-10-06 (-5d) | -144.02d → -141d |
| RHD4CSTL1B07D031065 | Steel Fixing Roof Slab - (B7.03 00 00 .14)-STL1-B07-D03 | 2027-10-11 → 2027-10-07 (-4d) | 2027-10-14 → 2027-10-10 (-4d) | -144.02d → -141d |
| RHD4CSTL1B07D031066 | RC Casting Roof Slab - (B7.03 00 00 .14)-STL1-B07-D03 | 2027-10-14 → 2027-10-11 (-3d) | 2027-10-17 → 2027-10-12 (-5d) | -144.02d → -141d |
| RHD4CSTL1B07D031067 | Deshuttering Roof Slab - (B7.03 00 00 .14)-STL1-B07-D03 | 2027-10-17 → 2027-10-13 (-4d) | 2027-10-19 → 2027-10-14 (-5d) | -144.02d → -141d |
| 188 | **RHD4-02-002-STL1-Roof Slab** | 2027-10-19 → 2027-10-16 (-3d) | 2027-10-31 → 2027-10-26 (-5d) |  |
| RHD4CSTL1B07D031068 | Shuttering Roof Slab - (B7.03 00 00 .15)-STL1-B07-D03 | 2027-10-19 → 2027-10-16 (-3d) | 2027-10-23 → 2027-10-18 (-5d) | -144.02d → -141d |
| RHD4CSTL1B07D031069 | Steel Fixing Roof Slab - (B7.03 00 00 .15)-STL1-B07-D03 | 2027-10-23 → 2027-10-19 (-4d) | 2027-10-26 → 2027-10-21 (-5d) | -144.02d → -141d |
| RHD4CSTL1B07D031070 | RC Casting Roof Slab - (B7.03 00 00 .15)-STL1-B07-D03 | 2027-10-26 → 2027-10-23 (-3d) | 2027-10-28 → 2027-10-24 (-4d) | -144.02d → -141d |
| RHD4CSTL1B07D031071 | Deshuttering Roof Slab - (B7.03 00 00 .15)-STL1-B07-D03 | 2027-10-28 → 2027-10-25 (-3d) | 2027-10-31 → 2027-10-26 (-5d) | -144.02d → -141d |
| 189 | **RHD4-02-002-STL1-Electrical Room-Finishes** | 2027-10-31 → 2027-10-27 (-4d) | 2027-12-13 → 2027-12-08 (-5d) |  |
| 190 | **RHD4-02-002-STL1-Masonary** | 2027-10-31 → 2027-10-27 (-4d) | 2027-11-03 → 2027-10-30 (-4d) |  |
| RHD4CSTL1B07D091072 | Masonary Block work (CMU walls) Insulated Block Work - (B7.04 22 00.01)-STL1-B07-D09 | 2027-10-31 → 2027-10-27 (-4d) | 2027-11-03 → 2027-10-30 (-4d) | -144.02d → -141d |
| 191 | **RHD4-02-002-STL1-Roofs waterproofing system** | 2027-11-03 → 2027-10-31 (-3d) | 2027-11-20 → 2027-11-15 (-5d) |  |
| RHD4CSTL1B07D071073 | 250 micron Polyethylene sheet - (B7.07 00 00.06)-STL1-B07-D07 | 2027-11-03 → 2027-10-31 (-3d) | 2027-11-06 → 2027-11-01 (-5d) | -123.02d → -120d |
| RHD4CSTL1B07D071074 | 50 mm thick minimum Foam Concrete - (B7.07 00 00.05)-STL1-B07-D07 | 2027-11-06 → 2027-11-02 (-4d) | 2027-11-09 → 2027-11-04 (-5d) | -123.02d → -120d |
| RHD4CSTL1B07D071075 | 30 mm thick Screed Concrete - (B7.07 00 00.04)-STL1-B07-D07 | 2027-11-06 → 2027-11-02 (-4d) | 2027-11-09 → 2027-11-04 (-5d) | -123.02d → -120d |
| RHD4CSTL1B07D071076 | 4 mm thick Waterproofing Bituminous Membrane - (B7.07 00 00.03)-STL1-B07-D07 | 2027-11-09 → 2027-11-06 (-3d) | 2027-11-11 → 2027-11-07 (-4d) | -123.02d → -120d |
| RHD4CSTL1B07D071077 | Geotextile Membrane - (B7.07 00 00.02)-STL1-B07-D07 | 2027-11-11 → 2027-11-08 (-3d) | 2027-11-16 → 2027-11-11 (-5d) | -123.02d → -120d |
| RHD4CSTL1B07D071078 | 50 mm thick Gravel Toppings - (B7.07 00 00.01)-STL1-B07-D07 | 2027-11-16 → 2027-11-13 (-3d) | 2027-11-20 → 2027-11-15 (-5d) | -123.02d → -120d |
| 192 | **RHD4-02-002-STL1-Stone Copings** | 2027-11-20 → 2027-11-16 (-4d) | 2027-11-22 → 2027-11-17 (-5d) |  |
| RHD4CSTL1B07D091079 | Supply and install Stone coping 40mm thickness Insulated Block Work - (B7.07 71 13.01)-STL1-B07-D09 | 2027-11-20 → 2027-11-16 (-4d) | 2027-11-22 → 2027-11-17 (-5d) | -123.02d → -120d |
| 194 | **RHD4-02-002-STL1-Cement Plastering** | 2027-11-22 → 2027-11-18 (-4d) | 2027-11-27 → 2027-11-22 (-5d) |  |
| RHD4CSTL1B07D091081 | Internal Plastering For Walls 15mm - (B7.09 24 00.01)-STL1-B07-D09 | 2027-11-22 → 2027-11-18 (-4d) | 2027-11-27 → 2027-11-22 (-5d) | -123.02d → -120d |
| RHD4CSTL1B07D091082 | External Plastering for walls 20mm - (B7.09 24 00.02)-STL1-B07-D09 | 2027-11-22 → 2027-11-18 (-4d) | 2027-11-25 → 2027-11-21 (-4d) | -123.02d → -120d |
| 195 | **RHD4-02-002-STL1-Metal Ladders** | 2027-11-25 → 2027-11-22 (-3d) | 2027-12-01 → 2027-11-27 (-4d) |  |
| RHD4CSTL1B07D051085 | With cage, Length 3.6m - (B7.05 51 33.10)-STL1-B07-D05 | 2027-11-25 → 2027-11-22 (-3d) | 2027-12-01 → 2027-11-27 (-4d) | -123.02d → -120d |
| 196 | **RHD4-02-002-STL1-Painting** | 2027-12-01 → 2027-11-28 (-3d) | 2027-12-07 → 2027-12-02 (-5d) |  |
| RHD4CSTL1B07D091087 | Internal Acrylic Paint For Walls Acrylic Paint - (B7.09 91 00.01)-STL1-B07-D09 | 2027-12-01 → 2027-11-28 (-3d) | 2027-12-07 → 2027-12-02 (-5d) | -123.02d → -120d |
| RHD4CSTL1B07D091088 | External Acrylic Paint for walls Acrylic Paint - (B7.09 91 00.02)-STL1-B07-D09 | 2027-12-01 → 2027-11-28 (-3d) | 2027-12-07 → 2027-12-02 (-5d) | -123.02d → -120d |
| 197 | **RHD4-02-002-STL1-Epoxy Coating** | 2027-12-07 → 2027-12-04 (-3d) | 2027-12-13 → 2027-12-08 (-5d) |  |
| RHD4CSTL1B07D091090 | Internal Acrylic Paint For Walls Acrylic Paint - (B7.09 96 56.01)-STL1-B07-D09 | 2027-12-07 → 2027-12-04 (-3d) | 2027-12-13 → 2027-12-08 (-5d) | -123.02d → -120d |
| 198 | **RHD4-02-002-STL1-Mechanical Works** | 2027-10-28 → 2027-10-25 (-3d) | 2027-12-26 → 2027-12-21 (-5d) |  |
| 199 | **RHD4-02-002-STL1-Wall mounted Split/AC** | 2027-10-28 → 2027-10-25 (-3d) | 2027-11-20 → 2027-11-15 (-5d) |  |

| ID | Task | Start | Finish | Total float |
| --- | --- | --- | --- | --- |
| RHD4CSTL1B07D151091 | Wall mounted Split Air Conditioning Unit. FCU-01 Installation 3.6 kw - (B7.23 81 26.01)-STL1-B07-D15 | 2027-10-28 → 2027-10-25 (-3d) | 2027-11-09 → 2027-11-04 (-5d) | -139.02d → -136d |
| RHD4CSTL1B07D151092 | Wall mounted Split Air Conditioning Unit. FCU-01 Installation 3.6 kw - (B7.23 81 26.01)-STL1-B07-D15 | 2027-11-09 → 2027-11-06 (-3d) | 2027-11-20 → 2027-11-15 (-5d) | -139.02d → -136d |
| 200 | **RHD4-02-002-STL1-Portable Fire Extinguishers** | 2027-11-20 → 2027-11-16 (-4d) | 2027-12-09 → 2027-12-05 (-4d) |  |
| RHD4CSTL1B07D151093 | Powder fire extinguishers installation - (B7.21 20 00.01)-STL1-B07-D15 | 2027-11-20 → 2027-11-16 (-4d) | 2027-11-29 → 2027-11-24 (-5d) | -139.02d → -136d |
| RHD4CSTL1B07D151094 | CO2 fire extinguishers installation - (B7.21 20 00.02)-STL1-B07-D15 | 2027-11-29 → 2027-11-25 (-4d) | 2027-12-09 → 2027-12-05 (-4d) | -139.02d → -136d |
| 201 | **RHD4-02-002-STL1-Scupper** | 2027-12-09 → 2027-12-06 (-3d) | 2027-12-18 → 2027-12-13 (-5d) |  |
| RHD4CSTL1B07D151095 | Scupper with diameter 110mm - Installation - (B7.22 13 19.13.01)-STL1-B07-D15 | 2027-12-09 → 2027-12-06 (-3d) | 2027-12-18 → 2027-12-13 (-5d) | -139.02d → -136d |
| 202 | **RHD4-02-002-STL1-Pipes, Fittings & Appurtenances** | 2027-12-18 → 2027-12-14 (-4d) | 2027-12-26 → 2027-12-21 (-5d) |  |
| RHD4CSTL1B07D151096 | uPVC pipes with diameter 25mm. Roof Slab - (B7.22 13 16.02)-STL1-B07-D15 | 2027-12-18 → 2027-12-14 (-4d) | 2027-12-26 → 2027-12-21 (-5d) | -139.02d → -136d |
| 203 | **RHD4-02-002-STL1-Electrical Works** | 2027-10-31 → 2027-10-27 (-4d) | 2028-04-11 → 2028-04-09 (-2d) |  |
| 204 | **RHD4-02-002-STL1-4Cx 6mm2 + 1Cx6mm2 Cu/XLPE/PVC** | 2027-10-31 → 2027-10-27 (-4d) | 2027-11-15 → 2027-11-10 (-5d) |  |
| RHD4CSTL1B07D161097 | Electrical Conduits and Pull Box Installation for LV Cables 4Cx mm²- (B7.26 05 19.03)-STL1-B07-D16 | 2027-10-31 → 2027-10-27 (-4d) | 2027-11-02 → 2027-10-28 (-5d) | -144.02d → -141d |
| RHD4CSTL1B07D161098 | Cable Tray Installation for LV Cables 4Cx mm²- (B7.26 05 19.03)-STL1-B07-D16 | 2027-11-02 → 2027-10-30 (-3d) | 2027-11-06 → 2027-11-01 (-5d) | -144.02d → -141d |
| RHD4CSTL1B07D161099 | LV Cable Pulling for LV Cables 4Cx mm²- (B7.26 05 19.03)-STL1-B07-D16 | 2027-11-06 → 2027-11-02 (-4d) | 2027-11-10 → 2027-11-06 (-4d) | -144.02d → -141d |
| RHD4CSTL1B07D161100 | LV Cable Termination for LV Cables 4Cx mm²- (B7.26 05 19.03)-STL1-B07-D16 | 2027-11-10 → 2027-11-07 (-3d) | 2027-11-15 → 2027-11-10 (-5d) | -144.02d → -141d |
| 205 | **RHD4-02-002-STL1-4Cx 95mm2 + 1Cx50mm2 Cu/XLPE/PVC** | 2027-11-10 → 2027-11-07 (-3d) | 2027-11-29 → 2027-11-24 (-5d) |  |
| RHD4CSTL1B07D161101 | Electrical Conduits and Pull Box Installation for LV Cables 4Cx95 mm²- (B7.26 05 19.05)-STL1-B07-D16 | 2027-11-10 → 2027-11-07 (-3d) | 2027-11-16 → 2027-11-11 (-5d) | -144.02d → -141d |
| RHD4CSTL1B07D161102 | Cable Tray Installation for LV Cables 4Cx95 mm²- (B7.26 05 19.05)-STL1-B07-D16 | 2027-11-16 → 2027-11-13 (-3d) | 2027-11-21 → 2027-11-16 (-5d) | -144.02d → -141d |
| RHD4CSTL1B07D161103 | LV Cable Pulling for LV Cables 4Cx95 mm²- (B7.26 05 19.05)-STL1-B07-D16 | 2027-11-21 → 2027-11-17 (-4d) | 2027-11-24 → 2027-11-20 (-4d) | -144.02d → -141d |
| RHD4CSTL1B07D161104 | LV Cable Termination for LV Cables 4Cx95 mm²- (B7.26 05 19.05)-STL1-B07-D16 | 2027-11-24 → 2027-11-21 (-3d) | 2027-11-29 → 2027-11-24 (-5d) | -144.02d → -141d |
| 206 | **RHD4-02-002-STL1-4Cx 50mm2 + 1Cx25mm2 CU/XLPE / SWA / PVC** | 2027-11-24 → 2027-11-21 (-3d) | 2027-12-12 → 2027-12-07 (-5d) |  |
| RHD4CSTL1B07D161105 | Electrical Conduits and Pull Box Installation for LV Cables 4Cx6 mm²- (B7.26 05 19.06)-STL1-B07-D16 | 2027-11-24 → 2027-11-21 (-3d) | 2027-11-30 → 2027-11-25 (-5d) | -144.02d → -141d |
| RHD4CSTL1B07D161106 | Cable Tray Installation for LV Cables 4Cx6 mm²- (B7.26 05 19.06)-STL1-B07-D16 | 2027-11-30 → 2027-11-27 (-3d) | 2027-12-04 → 2027-11-29 (-5d) | -144.02d → -141d |
| RHD4CSTL1B07D161107 | LV Cable Pulling for LV Cables 4Cx6 mm²- (B7.26 05 19.06)-STL1-B07-D16 | 2027-12-04 → 2027-11-30 (-4d) | 2027-12-08 → 2027-12-04 (-4d) | -144.02d → -141d |
| RHD4CSTL1B07D161108 | LV Cable Termination for LV Cables 4Cx6 mm²- (B7.26 05 19.06)-STL1-B07-D16 | 2027-12-08 → 2027-12-05 (-3d) | 2027-12-12 → 2027-12-07 (-5d) | -144.02d → -141d |
| 207 | **RHD4-02-002-STL1-4Cx 4mm2 + 1Cx4mm2 Cu/XLPE/PVC** | 2027-12-08 → 2027-12-05 (-3d) | 2027-12-25 → 2027-12-20 (-5d) |  |
| RHD4CSTL1B07D161109 | Electrical Conduits and Pull Box Installation for LV Cables 4Cx4 mm²- (B7.26 05 19.07)-STL1-B07-D16 | 2027-12-08 → 2027-12-05 (-3d) | 2027-12-12 → 2027-12-07 (-5d) | -144.02d → -141d |
| RHD4CSTL1B07D161110 | Cable Tray Installation for LV Cables 4Cx4 mm²- (B7.26 05 19.07)-STL1-B07-D16 | 2027-12-12 → 2027-12-08 (-4d) | 2027-12-16 → 2027-12-12 (-4d) | -144.02d → -141d |
| RHD4CSTL1B07D161111 | LV Cable Pulling for LV Cables 4Cx4 mm²- (B7.26 05 19.07)-STL1-B07-D16 | 2027-12-16 → 2027-12-13 (-3d) | 2027-12-20 → 2027-12-15 (-5d) | -144.02d → -141d |
| RHD4CSTL1B07D161112 | LV Cable Termination for LV Cables 4Cx4 mm²- (B7.26 05 19.07)-STL1-B07-D16 | 2027-12-20 → 2027-12-16 (-4d) | 2027-12-25 → 2027-12-20 (-5d) | -144.02d → -141d |
| 208 | **RHD4-02-002-STL1-Wiring Devices** | 2027-12-20 → 2027-12-16 (-4d) | 2028-01-02 → 2027-12-28 (-5d) |  |
| RHD4CSTL1B07D161113 | 13A Signle Socket Outlet WP for Wiring Devices - (B7.26 27 26 .01)-STL1-B07-D16 | 2027-12-20 → 2027-12-16 (-4d) | 2027-12-25 → 2027-12-20 (-5d) | -144.02d → -141d |
| RHD4CSTL1B07D161114 | 13A Double Socket Outlet WP for Wiring Devices - (B7.26 27 26 .02)-STL1-B07-D16 | 2027-12-25 → 2027-12-21 (-4d) | 2027-12-28 → 2027-12-23 (-5d) | -144.02d → -141d |
| RHD4CSTL1B07D161115 | 25A Switch Socket Outlet (for Split Unit), WP for Wiring Devices - (B7.26 27 26 .03)-STL1-B07-D16 | 2027-12-28 → 2027-12-25 (-3d) | 2028-01-02 → 2027-12-28 (-5d) | -144.02d → -141d |
| 209 | **RHD4-02-002-STL1-Grounding and Bonding** | 2027-12-28 → 2027-12-25 (-3d) | 2028-01-17 → 2028-01-12 (-5d) |  |
| RHD4CSTL1B07D161116 | Copper Conductor Connecting to Steel Rebar Installation for Copper Rods - (B7.26 05 26.03)-STL1-B07-D16 | 2027-12-28 → 2027-12-25 (-3d) | 2028-01-02 → 2027-12-28 (-5d) | -144.02d → -141d |
| RHD4CSTL1B07D161117 | Earth pits Installation for Copper Rods - (B7.26 05 26.03)-STL1-B07-D16 | 2028-01-02 → 2027-12-29 (-4d) | 2028-01-08 → 2028-01-03 (-5d) | -144.02d → -141d |
| RHD4CSTL1B07D161118 | Earth Bars Installation for Copper Rods - (B7.26 05 26.03)-STL1-B07-D16 | 2028-01-08 → 2028-01-04 (-4d) | 2028-01-12 → 2028-01-08 (-4d) | -144.02d → -141d |
| RHD4CSTL1B07D161119 | Copper Tape on Roof Installation for Copper Rods - (B7.26 05 26.03)-STL1-B07-D16 | 2028-01-12 → 2028-01-09 (-3d) | 2028-01-17 → 2028-01-12 (-5d) | -144.02d → -141d |
| 210 | **RHD4-02-002-STL1-Indoor Lighting Fixtures** | 2028-01-12 → 2028-01-09 (-3d) | 2028-02-09 → 2028-02-05 (-4d) |  |
| RHD4CSTL1B07D161120 | Electrical Conduits and Pull Box Installation - 24.5 W for Lighting Fixtures - (B7.26 51 00.01)-STL1-B07-D16 | 2028-01-12 → 2028-01-09 (-3d) | 2028-01-18 → 2028-01-13 (-5d) | -144.02d → -141d |
| RHD4CSTL1B07D161121 | LV Cable Pulling for Lighting Fixtures - (B7.26 51 00.01)-STL1-B07-D16 | 2028-01-18 → 2028-01-15 (-3d) | 2028-01-23 → 2028-01-18 (-5d) | -144.02d → -141d |
| RHD4CSTL1B07D161122 | Lighting Fixture Installation for Lighting Fixtures - (B7.26 51 00.01)-STL1-B07-D16 | 2028-01-23 → 2028-01-19 (-4d) | 2028-01-27 → 2028-01-23 (-4d) | -144.02d → -141d |
| RHD4CSTL1B07D161123 | Electrical Conduits and Pull Box Installation - 8 W for Lighting Fixtures - (B7.26 51 00.02)-STL1-B07-D16 | 2028-01-27 → 2028-01-24 (-3d) | 2028-01-31 → 2028-01-26 (-5d) | -144.02d → -141d |
| RHD4CSTL1B07D161124 | LV Cable Pulling for Lighting Fixtures - (B7.26 51 00.02)-STL1-B07-D16 | 2028-01-31 → 2028-01-27 (-4d) | 2028-02-03 → 2028-01-30 (-4d) | -144.02d → -141d |
| RHD4CSTL1B07D161125 | Lighting Fixture Installation for Lighting Fixtures - (B7.26 51 00.02)-STL1-B07-D16 | 2028-02-03 → 2028-01-31 (-3d) | 2028-02-09 → 2028-02-05 (-4d) | -144.02d → -141d |
| 211 | **RHD4-02-002-STL1-Outdoor Lighting Fixtures** | 2027-12-20 → 2027-12-16 (-4d) | 2028-01-16 → 2028-01-11 (-5d) |  |
| RHD4CSTL1B07D161126 | Electrical Conduits and Pull Box Installation - 7 W for Lighting Fixtures - (B7.26 56 00.01)-STL1-B07-D16 | 2027-12-20 → 2027-12-16 (-4d) | 2027-12-22 → 2027-12-18 (-4d) | -138.02d → -135d |
| RHD4CSTL1B07D161127 | LV Cable Pulling for Lighting Fixtures - (B7.26 56 00.01)-STL1-B07-D16 | 2027-12-22 → 2027-12-19 (-3d) | 2027-12-26 → 2027-12-21 (-5d) | -138.02d → -135d |
| RHD4CSTL1B07D161128 | Lighting Fixture Installation for Lighting Fixtures - (B7.26 56 00.01)-STL1-B07-D16 | 2027-12-26 → 2027-12-22 (-4d) | 2027-12-30 → 2027-12-26 (-4d) | -138.02d → -135d |
| RHD4CSTL1B07D161129 | Electrical Conduits and Pull Box Installation - 42.5 W for Lighting Fixtures - (B7.26 56 00.02)-STL1-B07-D16 | 2027-12-30 → 2027-12-27 (-3d) | 2028-01-04 → 2027-12-30 (-5d) | -138.02d → -135d |
| RHD4CSTL1B07D161130 | LV Cable Pulling for Lighting Fixtures - (B7.26 56 00.02)-STL1-B07-D16 | 2028-01-04 → 2028-01-01 (-3d) | 2028-01-10 → 2028-01-05 (-5d) | -138.02d → -135d |
| RHD4CSTL1B07D161131 | Lighting Fixture Installation for Lighting Fixtures - (B7.26 56 00.02)-STL1-B07-D16 | 2028-01-10 → 2028-01-06 (-4d) | 2028-01-16 → 2028-01-11 (-5d) | -138.02d → -135d |
| 212 | **RHD4-02-002-STL1- Enclosed Switches and Circuit Breakers** | 2028-01-10 → 2028-01-06 (-4d) | 2028-01-24 → 2028-01-19 (-5d) |  |
| RHD4CSTL1B07D161132 | 25-amp single-pole disconnect switches for Lighting Fixtures - (B7.26 28 16.01)-STL1-B07-D16 | 2028-01-10 → 2028-01-06 (-4d) | 2028-01-17 → 2028-01-12 (-5d) | -138.02d → -135d |
| RHD4CSTL1B07D161133 | 25-amp three-pole disconnect switches for Lighting Fixtures - (B7.26 28 16.02)-STL1-B07-D16 | 2028-01-17 → 2028-01-13 (-4d) | 2028-01-24 → 2028-01-19 (-5d) | -138.02d → -135d |
| 213 | **RHD4-02-002-STL1-Secondery Panel Boards** | 2028-01-17 → 2028-01-13 (-4d) | 2028-01-30 → 2028-01-25 (-5d) |  |
| RHD4CSTL1B07D161136 | Panel "LPP-UT5" Installation for Panelboards - (B7.26 24 16.06)-STL1-B07-D16 | 2028-01-17 → 2028-01-13 (-4d) | 2028-01-23 → 2028-01-18 (-5d) | -138.02d → -135d |
| RHD4CSTL1B07D161137 | Panel "DB-UT5" Termination for Panelboards - (B7.26 24 16.06)-STL1-B07-D16 | 2028-01-23 → 2028-01-19 (-4d) | 2028-01-30 → 2028-01-25 (-5d) | -138.02d → -135d |
| 214 | **RHD4-02-002-STL1-Addressable Fire-Alarm System** | 2028-01-12 → 2028-01-09 (-3d) | 2028-02-12 → 2028-02-07 (-5d) |  |
| RHD4CSTL1B07D161138 | 2 loop FACP with charger, battries and auto dialer for Fire Alarm - (B7.28 46 00.02)-STL1-B07-D16 | 2028-01-12 → 2028-01-09 (-3d) | 2028-01-17 → 2028-01-12 (-5d) | -140.02d → -137d |
| RHD4CSTL1B07D161139 | Addressable type fire alarm Photoelectric smoke detector complete base for Fire Alarm - (B7.28 46 00.04)-STL1-B07-D16 | 2028-01-17 → 2028-01-13 (-4d) | 2028-01-22 → 2028-01-17 (-5d) | -140.02d → -137d |
| RHD4CSTL1B07D161140 | Addressable type fire alarm manual call station/pull station for Fire Alarm - (B7.28 46 00.05)-STL1-B07-D16 | 2028-01-22 → 2028-01-18 (-4d) | 2028-01-26 → 2028-01-22 (-4d) | -140.02d → -137d |
| RHD4CSTL1B07D161141 | Addressable type fire alarm manual call station/pull station for Fire Alarm - (B7.28 46 00.06)-STL1-B07-D16 | 2028-01-26 → 2028-01-23 (-3d) | 2028-01-29 → 2028-01-24 (-5d) | -140.02d → -137d |
| RHD4CSTL1B07D161142 | Conventional 24V DC fire alarm wall mounted 15cd flasher/strobe. for Fire Alarm - (B7.28 46 00.07)-STL1-B07-D16 | 2028-01-29 → 2028-01-25 (-4d) | 2028-02-01 → 2028-01-27 (-5d) | -140.02d → -137d |
| RHD4CSTL1B07D161143 | Conventional 24V DC fire alarm wall mounted 15cd weather proof for Fire Alarm - (B7.28 46 00.08)-STL1-B07-D16 | 2028-02-01 → 2028-01-29 (-3d) | 2028-02-05 → 2028-01-31 (-5d) | -140.02d → -137d |
| RHD4CSTL1B07D161144 | Short CCT Isolator. for Fire Alarm - (B7.28 46 00.09)-STRM1-B07-D16 | 2028-02-05 → 2028-02-01 (-4d) | 2028-02-07 → 2028-02-02 (-5d) | -140.02d → -137d |
| RHD4CSTL1B07D161145 | Addressable Control module. for Fire Alarm - (B7.28 46 00.10)-STL1-B07-D16 | 2028-02-07 → 2028-02-03 (-4d) | 2028-02-12 → 2028-02-07 (-5d) | -140.02d → -137d |
| 215 | **RHD4-02-002-STL1-Main Motor Control Center (MCC)** | 2028-01-17 → 2028-01-13 (-4d) | 2028-01-30 → 2028-01-25 (-5d) |  |
| RHD4CSTL1B07D161151 | Installation for MCC-8 - (B7.26 29 00.03)-STL1-B07-D16 | 2028-01-17 → 2028-01-13 (-4d) | 2028-01-24 → 2028-01-19 (-5d) | -135.02d → -132d |

| ID | Task | Start | Finish | Total float |
| --- | --- | --- | --- | --- |
| RHD4CSTL1B07D161152 | Termination for MCC-8 - (B7.26 29 00.03)-STL1-B07-D16 | 2028-01-24 → 2028-01-20 (-4d) | 2028-01-30 → 2028-01-25 (-5d) | -135.02d → -132d |
| 216 | **RHD4-02-002-STL1-Programmable Logic Controllers** | 2028-03-23 → 2028-03-22 (-1d) | 2028-04-11 → 2028-04-09 (-2d) |  |
| RHD4CSTL1B07D161153 | PLC System Installation for - (B7.40 63 43.01)-STL1-B07-D16 | 2028-03-23 → 2028-03-22 (-1d) | 2028-03-30 → 2028-03-28 (-2d) | -177.02d → -176d |
| RHD4CSTL1B07D161154 | Process Control Wiring Installation for - (B7.40 67 10.01)-STL1-B07-D16 | 2028-03-30 → 2028-03-29 (-1d) | 2028-04-05 → 2028-04-03 (-2d) | -177.02d → -176d |
| RHD4CSTL1B07D161155 | Instrumentation for Process Systems for - (B7.40 70 00.01)-STL1-B07-D16 | 2028-04-05 → 2028-04-04 (-1d) | 2028-04-11 → 2028-04-09 (-2d) | -177.02d → -176d |
| 217 | **RHD4-02-002-Storm Lift Station 01-Site Works** | 2027-12-26 → 2027-12-22 (-4d) | 2028-04-30 → 2028-04-27 (-3d) |  |
| 218 | **RHD4-02-002-STL1-FLOW METER CHAMABER** | 2027-12-26 → 2027-12-22 (-4d) | 2028-02-23 → 2028-02-17 (-6d) |  |
| 219 | **RHD4-02-002-STL1-Concrete works** | 2027-12-26 → 2027-12-22 (-4d) | 2028-01-15 → 2028-01-10 (-5d) |  |
| RHD4CSTL1B07D031156 | Lean Concrete Plain Concrete - (B7.03 00 00 .01)-STL1-B07-D03 | 2027-12-26 → 2027-12-22 (-4d) | 2027-12-28 → 2027-12-23 (-5d) | -139.02d → -136d |
| RHD4CSTL1B07D031157 | Water proofing membrance Bituminous Sheet - (B7.07 13 13.01)-STL1-B07-D03 | 2027-12-28 → 2027-12-25 (-3d) | 2028-01-01 → 2027-12-27 (-5d) | -139.02d → -136d |
| RHD4CSTL1B07D031158 | Screed 50mm - (B7.03 00 00 .04)-STL1-B07-D03 | 2028-01-01 → 2027-12-28 (-4d) | 2028-01-03 → 2027-12-29 (-5d) | -139.02d → -136d |
| RHD4CSTL1B07D031159 | Steel Fixing - (B7.03 00 00 .04)-STL1-B07-D03 | 2028-01-03 → 2027-12-30 (-4d) | 2028-01-08 → 2028-01-03 (-5d) | -139.02d → -136d |
| RHD4CSTL1B07D031160 | Formwork - (B7.03 00 00 .04)-STL1-B07-D03 | 2028-01-08 → 2028-01-04 (-4d) | 2028-01-12 → 2028-01-08 (-4d) | -139.02d → -136d |
| RHD4CSTL1B07D031161 | RC Casting Fluid-Applied - (B7.03 00 00 .04)-STL1-B07-D03 | 2028-01-12 → 2028-01-09 (-3d) | 2028-01-15 → 2028-01-10 (-5d) | -139.02d → -136d |
| 220 | **RHD4-02-002-STL1-Retaining Walls & Slab** | 2028-01-15 → 2028-01-11 (-4d) | 2028-01-30 → 2028-01-25 (-5d) |  |
| RHD4CSTL1B07D031162 | Steel Fixing - (B7.03 00 00 .07)-STL1-B07-D03 | 2028-01-15 → 2028-01-11 (-4d) | 2028-01-19 → 2028-01-15 (-4d) | -139.02d → -136d |
| RHD4CSTL1B07D031163 | Formwork - (B7.03 00 00 .07)-STL1-B07-D03 | 2028-01-19 → 2028-01-16 (-3d) | 2028-01-23 → 2028-01-18 (-5d) | -139.02d → -136d |
| RHD4CSTL1B07D031164 | RC Casting - (B7.03 00 00 .07)-STL1-B07-D03 | 2028-01-23 → 2028-01-19 (-4d) | 2028-01-27 → 2028-01-23 (-4d) | -139.02d → -136d |
| RHD4CSTL1B07D031165 | Water protection Board membrance Fluid-Applied - (B7.03 00 00 .07)-STL1-B07-D03 | 2028-01-27 → 2028-01-24 (-3d) | 2028-01-30 → 2028-01-25 (-5d) | -139.02d → -136d |
| 221 | **RHD4-02-002-STL1-Metal Floor Door** | 2028-01-30 → 2028-01-26 (-4d) | 2028-02-05 → 2028-01-31 (-5d) |  |
| RHD4CSTL1B07D021166 | Installation of metal door size (600x600mm) - (B7.08 31 13.01)-STL1-B07-D02 | 2028-01-30 → 2028-01-26 (-4d) | 2028-02-05 → 2028-01-31 (-5d) | -139.02d → -136d |
| 222 | **RHD4-02-002-STL1-Magnetic type flowmeter Installation** | 2028-02-05 → 2028-02-01 (-4d) | 2028-02-23 → 2028-02-17 (-6d) |  |
| RHD4CSTL1B07D151167 | Flow meter installation 150mm - (B7.22 05 19.03)-STL1-B07-D15 | 2028-02-05 → 2028-02-01 (-4d) | 2028-02-10 → 2028-02-06 (-4d) | -139.02d → -136d |
| RHD4CSTL1B07D151168 | UPVC Conduits 1 inch UPVC - (B7.22 05 19.03)-STL1-B07-D15 | 2028-02-10 → 2028-02-07 (-3d) | 2028-02-15 → 2028-02-10 (-5d) | -139.02d → -136d |
| RHD4CSTL1B07D151169 | Electrical power and cable connection - (B7.22 05 19.03)-STL1-B07-D15 | 2028-02-15 → 2028-02-12 (-3d) | 2028-02-19 → 2028-02-14 (-5d) | -139.02d → -136d |
| RHD4CSTL1B07D151170 | Flow meter Panel Integration and connection - (B7.22 05 19.03)-STL1-B07-D15 | 2028-02-19 → 2028-02-15 (-4d) | 2028-02-23 → 2028-02-17 (-6d) | -139.02d → -136d |
| 223 | **RHD4-02-002-STL1-GENERATOR FOUNDATION** | 2027-12-28 → 2027-12-25 (-3d) | 2028-04-30 → 2028-04-27 (-3d) |  |
| 224 | **RHD4-02-002-STL1-GENERATOR FOUNDATION-Concrete works** | 2027-12-28 → 2027-12-25 (-3d) | 2028-01-24 → 2028-01-19 (-5d) |  |
| RHD4CSTL1B07D031171 | Lean Concrete Plain Concrete - (B7.03 00 00 .01)-STL1-B07-D03 | 2027-12-28 → 2027-12-25 (-3d) | 2027-12-30 → 2027-12-26 (-4d) | -132.02d → -129d |
| RHD4CSTL1B07D031172 | Water proofing membrance Bituminous Sheet - (B7.07 13 13.01)-STL1-B07-D03 | 2027-12-30 → 2027-12-27 (-3d) | 2028-01-03 → 2027-12-29 (-5d) | -132.02d → -129d |
| RHD4CSTL1B07D031173 | Screed 50mm - (B7.03 00 00 .04)-STL1-B07-D03 | 2028-01-03 → 2027-12-30 (-4d) | 2028-01-08 → 2028-01-03 (-5d) | -132.02d → -129d |
| RHD4CSTL1B07D031174 | Steel Fixing - (B7.03 00 00 .04)-STL1-B07-D03 | 2028-01-08 → 2028-01-04 (-4d) | 2028-01-12 → 2028-01-08 (-4d) | -132.02d → -129d |
| RHD4CSTL1B07D031175 | Formwork - (B7.03 00 00 .04)-STL1-B07-D03 | 2028-01-12 → 2028-01-09 (-3d) | 2028-01-18 → 2028-01-13 (-5d) | -132.02d → -129d |
| RHD4CSTL1B07D031176 | RC Casting - (B7.03 00 00 .04)-STL1-B07-D03 | 2028-01-18 → 2028-01-15 (-3d) | 2028-01-24 → 2028-01-19 (-5d) | -132.02d → -129d |
| 225 | **RHD4-02-002-STL1-Standby Diesel Generator** | 2028-01-24 → 2028-01-20 (-4d) | 2028-04-30 → 2028-04-27 (-3d) |  |
| RHD4CSTL1B07D151177 | Standby Diesel Generator Set 150 KVA - Installation 100kva - (B7.26 32 12.05)-STL1-B07-D15 | 2028-01-24 → 2028-01-20 (-4d) | 2028-01-29 → 2028-01-24 (-5d) | -132.02d → -129d |
| RHD4CSTL1B07D151178 | Automatic Transfer Switch ATS panel 300A - Installation 160A - (B7.26 32 12.06)-STL1-B07-D15 | 2028-01-29 → 2028-01-25 (-4d) | 2028-02-02 → 2028-01-29 (-4d) | -132.02d → -129d |
| RHD4CSTL1B07D151179 | Lean Concrete Plain Concrete - (B7.03 00 00 .01)-STL1-B07-D15 | 2028-02-02 → 2028-01-30 (-3d) | 2028-02-08 → 2028-02-03 (-5d) | -132.02d → -129d |
| RHD4CSTL1B07D151180 | Water proofing membrance Bituminous Sheet - (B7.07 13 13.01)-STL1-B07-D15 | 2028-04-05 → 2028-04-04 (-1d) | 2028-04-11 → 2028-04-09 (-2d) | -177.02d → -176d |
| RHD4CSTL1B07D151181 | Screed 50mm - (B7.03 00 00 .04)-STL1-B07-D15 | 2028-04-11 → 2028-04-10 (-1d) | 2028-04-15 → 2028-04-12 (-3d) | -177.02d → -176d |
| RHD4CSTL1B07D151182 | Steel Fixing - (B7.03 00 00 .05)-STL1-B07-D15 | 2028-04-15 → 2028-04-13 (-2d) | 2028-04-19 → 2028-04-17 (-2d) | -177.02d → -176d |
| RHD4CSTL1B07D151183 | Formwork - (B7.03 00 00 .05)-STL1-B07-D15 | 2028-04-19 → 2028-04-18 (-1d) | 2028-04-23 → 2028-04-20 (-3d) | -177.02d → -176d |
| RHD4CSTL1B07D151184 | RC Casting - (B7.03 00 00 .05)-STL1-B07-D15 | 2028-04-23 → 2028-04-22 (-1d) | 2028-04-26 → 2028-04-24 (-2d) | -177.02d → -176d |
| RHD4CSTL1B07D151185 | Water protection Board membrance Fluid-Applied - (B7.07 13 13.01)-STL1-B07-D15 | 2028-04-26 → 2028-04-25 (-1d) | 2028-04-30 → 2028-04-27 (-3d) | -177.02d → -176d |
| 4 | **Sewage Lift Station 01** |  | 2028-04-09 → 2028-04-05 (-4d) |  |
| 20 | **RHD4-02-002-Sewage Lift Station 01-Electrical Room** |  | 2028-03-26 → 2028-03-22 (-4d) |  |
| 21 | **RHD4-02-002-SWL1-B07-Sub Structure** |  | 2027-12-02 → 2027-11-28 (-4d) |  |
| 22 | **RHD4-02-002-SWL1-B07-Electrical Room-Plain Concrete** |  | 2027-06-03 → 2027-06-05 (+2d) |  |
| RHD4CSWL1B07D031036 | Lean Concrete Plain Concrete for Electrical Room - (B7.03 00 00 .01)-SWL1-B07-D03 | 2027-06-02 → 2027-06-03 (+1d) | 2027-06-03 → 2027-06-05 (+2d) | -159d → -160d |
| 23 | **RHD4-02-002-SWL1-B07-Electrical Room-Footing / Foundation** | 2027-06-05 → 2027-06-06 (+1d) | 2027-07-11 → 2027-07-10 (-1d) |  |
| RHD4CSWL1B07D031037 | Shuttering Foundation for Electrical Room - (B7.03 00 00 .05)-SWL1-B07-D03 | 2027-06-05 → 2027-06-06 (+1d) | 2027-06-07 → 2027-06-08 (+1d) | -159d → -160d |
| RHD4CSWL1B07D031038 | Steel Fixing Foundation for Electrical Room - (B7.03 00 00 .05)-SWL1-B07-D03 | 2027-07-01 → 2027-06-30 (-1d) | 2027-07-05 → 2027-07-04 (-1d) | -179d → -178d |
| RHD4CSWL1B07D031039 | RC Casting Foundation for Electrical Room - (B7.03 00 00 .05)-SWL1-B07-D03 | 2027-07-06 → 2027-07-05 (-1d) | 2027-07-07 → 2027-07-06 (-1d) | -179d → -178d |
| RHD4CSWL1B07D031040 | Deshuttering Foundation for Electrical Room - (B7.03 00 00 .05)-SWL1-B07-D03 | 2027-07-08 → 2027-07-07 (-1d) | 2027-07-11 → 2027-07-10 (-1d) | -179d → -178d |
| 24 | **RHD4-02-002-SWL1-B07-Electrical Room-Neck Column** | 2027-07-27 → 2027-07-25 (-2d) | 2027-08-10 → 2027-08-07 (-3d) |  |
| RHD4CSWL1B07D031041 | Steel Fixing for Neck Column for Electrical Room - (B7.03 00 00 .06)-SWL1-B07-D03 | 2027-07-27 → 2027-07-25 (-2d) | 2027-07-31 → 2027-07-27 (-4d) | -192.02d → -190d |
| RHD4CSWL1B07D031042 | Shuttering for Neck Column for Electrical Room - (B7.03 00 00 .06)-SWL1-B07-D03 | 2027-07-31 → 2027-07-28 (-3d) | 2027-08-04 → 2027-08-01 (-3d) | -192.02d → -190d |
| RHD4CSWL1B07D031043 | RC Casting for Neck Column for Electrical Room - (B7.03 00 00 .06)-SWL1-B07-D03 | 2027-08-04 → 2027-08-02 (-2d) | 2027-08-07 → 2027-08-03 (-4d) | -192.02d → -190d |
| RHD4CSWL1B07D031044 | Deshuttering for Neck Column for Electrical Room - (B7.03 00 00 .06)-SWL1-B07-D03 | 2027-08-07 → 2027-08-04 (-3d) | 2027-08-10 → 2027-08-07 (-3d) | -192.02d → -190d |
| 25 | **RHD4-02-002-SWL1-B07-Electrical Room-Ground Beams** | 2027-08-10 → 2027-08-08 (-2d) | 2027-08-24 → 2027-08-21 (-3d) |  |
| RHD4CSWL1B07D031045 | Steel Fixing for Ground Beams for Electrical Room - (B7.03 00 00 .08)-SWL1-B07-D03 | 2027-08-10 → 2027-08-08 (-2d) | 2027-08-14 → 2027-08-10 (-4d) | -192.02d → -190d |
| RHD4CSWL1B07D031046 | Shuttering for Ground Beams for Electrical Room - (B7.03 00 00 .08)-SWL1-B07-D03 | 2027-08-14 → 2027-08-11 (-3d) | 2027-08-18 → 2027-08-15 (-3d) | -192.02d → -190d |
| RHD4CSWL1B07D031047 | RC Casting for Ground Beams for Electrical Room - (B7.03 00 00 .08)-SWL1-B07-D03 | 2027-08-18 → 2027-08-16 (-2d) | 2027-08-21 → 2027-08-17 (-4d) | -192.02d → -190d |
| RHD4CSWL1B07D031048 | Deshuttering for Ground Beams for Electrical Room - (B7.03 00 00 .08)-SWL1-B07-D03 | 2027-08-21 → 2027-08-18 (-3d) | 2027-08-24 → 2027-08-21 (-3d) | -192.02d → -190d |
| 26 | **RHD4-02-002-SWL1-B07-Electrical Room-Aggregate base Course** | 2027-08-24 → 2027-08-22 (-2d) | 2027-09-01 → 2027-08-29 (-3d) |  |
| RHD4CSWL1B07D031049 | Laying Aggregate base course Slab on Grade - (B7.32 11 23.01)-SWL1-B07-D03 | 2027-08-24 → 2027-08-22 (-2d) | 2027-08-29 → 2027-08-25 (-4d) | -192.02d → -190d |
| RHD4CSWL1B07D031050 | Compaction Slab on Grade - (B7.32 11 23.01)-SWL1-B07-D03 | 2027-08-29 → 2027-08-26 (-3d) | 2027-09-01 → 2027-08-29 (-3d) | -192.02d → -190d |
| 27 | **RHD4-02-002-SWL1-B07-Electrical Room-Slab on Grade** | 2027-09-04 → 2027-09-01 (-3d) | 2027-09-27 → 2027-09-22 (-5d) |  |
| RHD4CSWL1B07D031051 | Screeding for SOG works Slab on Grade for Electrical Room - (B7.03 00 00 .02)-SWL1-B07-D03 | 2027-09-04 → 2027-09-01 (-3d) | 2027-09-08 → 2027-09-05 (-3d) | -194.02d → -192d |
| RHD4CSWL1B07D031052 | Shuttering for Slab on Grade for Electrical Room - (B7.03 00 00 .09)-SWL1-B07-D03 | 2027-09-08 → 2027-09-06 (-2d) | 2027-09-14 → 2027-09-11 (-3d) | -194.02d → -192d |

| ID | Task | Start | Finish | Total float |
| --- | --- | --- | --- | --- |
| RHD4CSWL1B07D031053 | Steel Fixing for Slab on Grade for Electrical Room - (B7.03 00 00 .09)-SWL1-B07-D03 | 2027-09-14 → 2027-09-12 (-2d) | 2027-09-20 → 2027-09-16 (-4d) | -194.02d → -192d |
| RHD4CSWL1B07D031054 | RC Casting for Slab on Grade for Electrical Room - (B7.03 00 00 .09)-SWL1-B07-D03 | 2027-09-20 → 2027-09-18 (-2d) | 2027-09-22 → 2027-09-19 (-3d) | -194.02d → -192d |
| RHD4CSWL1B07D031055 | Deshuttering for Slab on Grade for Electrical Room - (B7.03 00 00 .09)-SWL1-B07-D03 | 2027-09-22 → 2027-09-20 (-2d) | 2027-09-27 → 2027-09-22 (-5d) | -194.02d → -192d |
| 28 | **RHD4-02-002-SWL1-B07-Electrical Room-Fluid-Applied Waterproofing** | 2027-09-27 → 2027-09-25 (-2d) | 2027-10-02 → 2027-09-28 (-4d) |  |
| RHD4CSWL1B07D071056 | 2 coats of bitumen on Grade Beams and SOW Slab on Grade - (B7.07 14 00.01)-SWL1-B07-D07 | 2027-09-27 → 2027-09-25 (-2d) | 2027-10-02 → 2027-09-28 (-4d) | -194.02d → -192d |
| 29 | **RHD4-02-002-SWL1-B07-Electrical Room-Vapor Retarders** | 2027-10-02 → 2027-09-29 (-3d) | 2027-10-05 → 2027-10-02 (-3d) |  |
| RHD4CSWL1B07D071057 | 250 micron Polyethylene sheet Slab on Grade - (B7.07 26 16.01)-SWL1-B07-D07 | 2027-10-02 → 2027-09-29 (-3d) | 2027-10-05 → 2027-10-02 (-3d) | -194.02d → -192d |
| 30 | **RHD4-02-002-SWL1-B07-Electrical Room-Columns** | 2027-10-05 → 2027-10-03 (-2d) | 2027-10-23 → 2027-10-19 (-4d) |  |
| RHD4CSWL1B07D031058 | Shuttering for Columns for Electrical Room - (B7.03 00 00 .13)-SWL1-B07-D03 | 2027-10-05 → 2027-10-03 (-2d) | 2027-10-11 → 2027-10-07 (-4d) | -194.02d → -192d |
| RHD4CSWL1B07D031059 | Steel Fixing for Columns for Electrical Room - (B7.03 00 00 .13)-SWL1-B07-D03 | 2027-10-12 → 2027-10-10 (-2d) | 2027-10-16 → 2027-10-12 (-4d) | -195.02d → -193d |
| RHD4CSWL1B07D031060 | RC Casting for Columns for Electrical Room - (B7.03 00 00 .13)-SWL1-B07-D03 | 2027-10-16 → 2027-10-13 (-3d) | 2027-10-18 → 2027-10-14 (-4d) | -195.02d → -193d |
| RHD4CSWL1B07D031061 | Deshuttering for Columns for Electrical Room - (B7.03 00 00 .13)-SWL1-B07-D03 | 2027-10-18 → 2027-10-16 (-2d) | 2027-10-23 → 2027-10-19 (-4d) | -195.02d → -193d |
| 31 | **RHD4-02-002-SWL1-B07-Electrical Room-Beams** | 2027-10-23 → 2027-10-20 (-3d) | 2027-11-18 → 2027-11-14 (-4d) |  |
| RHD4CSWL1B07D031062 | Shuttering for Roof Beams for Electrical Room - (B7.03 00 00 .14)-SWL1-B07-D03 | 2027-10-23 → 2027-10-20 (-3d) | 2027-10-30 → 2027-10-26 (-4d) | -195.02d → -193d |
| RHD4CSWL1B07D031063 | Steel Fixing for Roof Beams for Electrical Room - (B7.03 00 00 .14)-SWL1-B07-D03 | 2027-11-02 → 2027-10-28 (-5d) | 2027-11-10 → 2027-11-06 (-4d) | -198d → -194d |
| RHD4CSWL1B07D031064 | RC Casting for Roof Beams for Electrical Room - (B7.03 00 00 .14)-SWL1-B07-D03 | 2027-11-11 → 2027-11-07 (-4d) | 2027-11-15 → 2027-11-10 (-5d) | -198d → -194d |
| RHD4CSWL1B07D031065 | Deshuttering for Roof Beams for Electrical Room - (B7.03 00 00 .14)-SWL1-B07-D03 | 2027-11-16 → 2027-11-11 (-5d) | 2027-11-18 → 2027-11-14 (-4d) | -198d → -194d |
| 32 | **RHD4-02-002-SWL1-B07-Electrical Room-Roof Slab** | 2027-11-20 → 2027-11-15 (-5d) | 2027-12-02 → 2027-11-28 (-4d) |  |
| RHD4CSWL1B07D031066 | Shuttering for Roof Slab for Electrical Room - (B7.03 00 00 .15)-SWL1-B07-D03 | 2027-11-20 → 2027-11-15 (-5d) | 2027-11-22 → 2027-11-17 (-5d) | -198d → -194d |
| RHD4CSWL1B07D031067 | Steel Fixing for Roof Slab for Electrical Room - (B7.03 00 00 .15)-SWL1-B07-D03 | 2027-11-23 → 2027-11-18 (-5d) | 2027-11-27 → 2027-11-22 (-5d) | -198d → -194d |
| RHD4CSWL1B07D031068 | RC Casting for Roof Slab for Electrical Room - (B7.03 00 00 .15)-SWL1-B07-D03 | 2027-11-28 → 2027-11-23 (-5d) | 2027-11-29 → 2027-11-24 (-5d) | -198d → -194d |
| RHD4CSWL1B07D031069 | Deshuttering for Roof Slab for Electrical Room - (B7.03 00 00 .15)-SWL1-B07-D03 | 2027-11-30 → 2027-11-25 (-5d) | 2027-12-02 → 2027-11-28 (-4d) | -198d → -194d |
| 33 | **RHD4-02-002-SWL1-B07-Finishes** | 2027-12-04 → 2027-11-29 (-5d) | 2028-01-18 → 2028-01-13 (-5d) |  |
| 34 | **RHD4-02-002-SWL1-B07-Finishes-Masonary** | 2027-12-04 → 2027-11-29 (-5d) | 2027-12-08 → 2027-12-04 (-4d) |  |
| RHD4CSWL1B07D091070 | Masonary Block work (CMU walls) Insulated Block Work - (B7.04 22 00.01)-SWL1-B07-D09 | 2027-12-04 → 2027-11-29 (-5d) | 2027-12-08 → 2027-12-04 (-4d) | -198d → -194d |
| 35 | **RHD4-02-002-SWL1-B07-Finishes-Roofs waterproofing system** | 2027-12-04 → 2027-11-29 (-5d) | 2027-12-25 → 2027-12-20 (-5d) |  |
| RHD4CSWL1B07D071071 | 250 micron Polyethylene sheet - (B7.07 00 00.06)-SWL1-B07-D07 | 2027-12-04 → 2027-11-29 (-5d) | 2027-12-05 → 2027-11-30 (-5d) | -198d → -194d |
| RHD4CSWL1B07D071072 | 50 mm thick minimum Foam Concrete - (B7.07 00 00.05)-SWL1-B07-D07 | 2027-12-06 → 2027-12-01 (-5d) | 2027-12-08 → 2027-12-04 (-4d) | -198d → -194d |
| RHD4CSWL1B07D071073 | 30 mm thick Screed Concrete - (B7.07 00 00.04)-SWL1-B07-D07 | 2027-12-09 → 2027-12-05 (-4d) | 2027-12-12 → 2027-12-07 (-5d) | -198d → -194d |
| RHD4CSWL1B07D071074 | 4 mm thick Waterproofing Bituminous Membrane - (B7.07 00 00.03)-SWL1-B07-D07 | 2027-12-13 → 2027-12-08 (-5d) | 2027-12-15 → 2027-12-11 (-4d) | -198d → -194d |
| RHD4CSWL1B07D071075 | Geotextile Membrane - (B7.07 00 00.02)-SWL1-B07-D07 | 2027-12-16 → 2027-12-12 (-4d) | 2027-12-20 → 2027-12-15 (-5d) | -198d → -194d |
| RHD4CSWL1B07D071076 | 50 mm thick Gravel Toppings - (B7.07 00 00.01)-SWL1-B07-D07 | 2027-12-21 → 2027-12-16 (-5d) | 2027-12-25 → 2027-12-20 (-5d) | -198d → -194d |
| 36 | **RHD4-02-002-SWL1-B07-Finishes-Manufactured Copings** | 2027-12-21 → 2027-12-16 (-5d) | 2027-12-26 → 2027-12-21 (-5d) |  |
| RHD4CSWL1B07D091077 | Supply and install Stone coping 40mm thickness Insulated Block Work - (B7.07 71 13.01)-SWL1-B07-D09 | 2027-12-21 → 2027-12-16 (-5d) | 2027-12-26 → 2027-12-21 (-5d) | -188d → -184d |
| 38 | **RHD4-02-002-SWL1-B07-Finishes-Cement Plastering** | 2027-12-21 → 2027-12-16 (-5d) | 2027-12-26 → 2027-12-21 (-5d) |  |
| RHD4CSWL1B07D091079 | Internal Plastering For Walls 15mm - (B7.09 24 00.01)-SWL1-B07-D09 | 2027-12-21 → 2027-12-16 (-5d) | 2027-12-26 → 2027-12-21 (-5d) | -188d → -184d |
| RHD4CSWL1B07D091080 | External Plastering for walls 20mm - (B7.09 24 00.02)-SWL1-B07-D09 | 2027-12-21 → 2027-12-16 (-5d) | 2027-12-26 → 2027-12-21 (-5d) | -188d → -184d |
| 39 | **RHD4-02-002-SWL1-B07-Finishes-Metal Ladders** | 2027-12-21 → 2027-12-16 (-5d) | 2028-01-08 → 2028-01-03 (-5d) |  |
| RHD4CSWL1B07D051082 | Length 5.4m - (B7.05 51 33.06)-SWL1-B07-D05 | 2027-12-21 → 2027-12-16 (-5d) | 2027-12-27 → 2027-12-22 (-5d) | -188d → -184d |
| RHD4CSWL1B07D051084 | Installation of With cage, Length 4.3m - (B7.05 51 33.11)-SWL1-B07-D05 | 2027-12-28 → 2027-12-23 (-5d) | 2028-01-02 → 2027-12-28 (-5d) | -188d → -184d |
| RHD4CSWL1B07D051085 | Install Checkered plate - (B7.05 50 00 .01)-SWL1-B07-D05 | 2028-01-03 → 2027-12-29 (-5d) | 2028-01-08 → 2028-01-03 (-5d) | -188d → -184d |
| 40 | **RHD4-02-002-SWL1-B07-Finishes-Painting** | 2028-01-09 → 2028-01-04 (-5d) | 2028-01-13 → 2028-01-09 (-4d) |  |
| RHD4CSWL1B07D091086 | Internal Acrylic Paint For Walls Acrylic Paint - (B7.09 91 00.01)-SWL1-B07-D09 | 2028-01-09 → 2028-01-04 (-5d) | 2028-01-13 → 2028-01-09 (-4d) | -188d → -184d |
| RHD4CSWL1B07D091087 | External Acrylic Paint for walls Acrylic Paint - (B7.09 91 00.02)-SWL1-B07-D09 | 2028-01-09 → 2028-01-04 (-5d) | 2028-01-13 → 2028-01-09 (-4d) | -188d → -184d |
| 41 | **RHD4-02-002-SWL1-B07-Finishes-Epoxy Coating** | 2028-01-15 → 2028-01-10 (-5d) | 2028-01-18 → 2028-01-13 (-5d) |  |
| RHD4CSWL1B07D091088 | Internal Acrylic Paint For Walls Acrylic Paint - (B7.09 96 56.01)-SWL1-B07-D09 | 2028-01-15 → 2028-01-10 (-5d) | 2028-01-18 → 2028-01-13 (-5d) | -188d → -184d |
| 42 | **RHD4-02-002-SWL1-B07-Mechanical Works** | 2027-12-26 → 2027-12-21 (-5d) | 2028-02-10 → 2028-02-06 (-4d) |  |
| 43 | **RHD4-02-002-SWL1-B07-Mechanical Works-Wall mounted Split/AC** | 2028-01-19 → 2028-01-15 (-4d) | 2028-01-31 → 2028-01-26 (-5d) |  |
| RHD4CSWL1B07D151089 | Wall mounted Split Air Conditioning Unit. FCU-01 Installation 3.5 kw - (B7.23 81 26.01)-SWL1-B07-D15 | 2028-01-19 → 2028-01-15 (-4d) | 2028-01-25 → 2028-01-20 (-5d) | -188d → -184d |
| RHD4CSWL1B07D151090 | Wall mounted Split Air Conditioning Unit. FCU-01 Installation 3.5 kw - (B7.23 81 26.01)-SWL1-B07-D15 | 2028-01-26 → 2028-01-22 (-4d) | 2028-01-31 → 2028-01-26 (-5d) | -188d → -184d |
| 44 | **RHD4-02-002-SWL1-B07-Mechanical Works-Portable Fire Extinguishers** | 2028-02-01 → 2028-01-27 (-5d) | 2028-02-10 → 2028-02-06 (-4d) |  |
| RHD4CSWL1B07D151091 | Powder fire extinguishers installation - (B7.21 20 00.01)-SWL1-B07-D15 | 2028-02-01 → 2028-01-27 (-5d) | 2028-02-06 → 2028-02-01 (-5d) | -188d → -184d |
| RHD4CSWL1B07D151092 | CO2 fire extinguishers installation - (B7.21 20 00.02)-SWL1-B07-D15 | 2028-02-07 → 2028-02-02 (-5d) | 2028-02-10 → 2028-02-06 (-4d) | -188d → -184d |
| 45 | **RHD4-02-002-SWL1-B07-Mechanical Works-Scupper** | 2027-12-26 → 2027-12-21 (-5d) | 2027-12-28 → 2027-12-23 (-5d) |  |
| RHD4CSWL1B07D151093 | Scupper with diameter 110mm - Installation - (B7.22 13 19.13.01)-SWL1-B07-D15 | 2027-12-26 → 2027-12-21 (-5d) | 2027-12-28 → 2027-12-23 (-5d) | -198d → -194d |
| 46 | **RHD4-02-002-SWL1-B07-Mechanical Works-Pipes, Fittings & Appurtenances** | 2027-12-29 → 2027-12-25 (-4d) | 2028-01-02 → 2027-12-28 (-5d) |  |
| RHD4CSWL1B07D151094 | uPVC pipes with diameter 110mm. Roof Slab - (B7.22 13 16.01)-SWL1-B07-D15 | 2027-12-29 → 2027-12-25 (-4d) | 2028-01-01 → 2027-12-27 (-5d) | -198d → -194d |
| RHD4CSWL1B07D151095 | uPVC pipes with diameter 25mm. Roof Slab - (B7.22 13 16.02)-SWL1-B07-D15 | 2027-12-29 → 2027-12-25 (-4d) | 2028-01-02 → 2027-12-28 (-5d) | -198d → -194d |
| 47 | **RHD4-02-002-SWL1-B07-Electrical Works** | 2027-12-09 → 2027-12-05 (-4d) | 2028-03-26 → 2028-03-22 (-4d) |  |
| 48 | **RHD4-02-002-SWL1-B07-Electrical Works-4Cx 185mm2 CU/XLPE/SWA/PVC** | 2027-12-09 → 2027-12-05 (-4d) | 2027-12-22 → 2027-12-18 (-4d) |  |
| RHD4CSWL1B07D161096 | Electrical Conduits and Pull Box Installation for LV Cables 4Cx185 mm²- (B7.26 05 19.01)-SWL1-B07-D16 | 2027-12-09 → 2027-12-05 (-4d) | 2027-12-13 → 2027-12-08 (-5d) | -197d → -193d |
| RHD4CSWL1B07D161097 | Cable Tray Installation for LV Cables 4Cx185 mm²- (B7.26 05 19.01)-SWL1-B07-D16 | 2027-12-14 → 2027-12-09 (-5d) | 2027-12-16 → 2027-12-12 (-4d) | -197d → -193d |
| RHD4CSWL1B07D161098 | LV Cable Pulling for LV Cables 4Cx185 mm²- (B7.26 05 19.01)-SWL1-B07-D16 | 2027-12-18 → 2027-12-13 (-5d) | 2027-12-19 → 2027-12-14 (-5d) | -197d → -193d |
| RHD4CSWL1B07D161099 | LV Cable Termination for LV Cables 4Cx185 mm²- (B7.26 05 19.01)-SWL1-B07-D16 | 2027-12-20 → 2027-12-15 (-5d) | 2027-12-22 → 2027-12-18 (-4d) | -197d → -193d |
| 49 | **RHD4-02-002-SWL1-B07-Electrical Works-4Cx 70mm2 + 1Cx35mm2 Cu/XLPE/PVC FROM MCC-3 TO LP-01** | 2027-12-20 → 2027-12-15 (-5d) | 2028-01-02 → 2027-12-28 (-5d) |  |
| RHD4CSWL1B07D161100 | Electrical Conduits and Pull Box Installation for LV Cables 4Cx95 mm²- (B7.26 05 19.02)-SWL1-B07-D16 | 2027-12-20 → 2027-12-15 (-5d) | 2027-12-22 → 2027-12-18 (-4d) | -197d → -193d |
| RHD4CSWL1B07D161101 | Cable Tray Installation for LV Cables 4Cx95 mm²- (B7.26 05 19.02)-SWL1-B07-D16 | 2027-12-23 → 2027-12-19 (-4d) | 2027-12-25 → 2027-12-20 (-5d) | -196d → -192d |
| RHD4CSWL1B07D161102 | LV Cable Pulling for LV Cables 4Cx95 mm²- (B7.26 05 19.02)-SWL1-B07-D16 | 2027-12-26 → 2027-12-21 (-5d) | 2027-12-29 → 2027-12-25 (-4d) | -196d → -192d |
| RHD4CSWL1B07D161103 | LV Cable Termination for LV Cables 4Cx95 mm²- (B7.26 05 19.02)-SWL1-B07-D16 | 2027-12-30 → 2027-12-26 (-4d) | 2028-01-02 → 2027-12-28 (-5d) | -196d → -192d |
| 50 | **RHD4-02-002-SWL1-B07-Electrical Works-4Cx 6mm2 + 1Cx6mm2 Cu/XLPE/PVC** | 2027-12-23 → 2027-12-19 (-4d) | 2028-01-09 → 2028-01-05 (-4d) |  |

| ID | Task | Start | Finish | Total float |
| --- | --- | --- | --- | --- |
| RHD4CSWL1B07D161104 | Electrical Conduits and Pull Box Installation for LV Cables 4Cx10 mm²- (B7.26 05 19.03)-SWL1-B07-D16 | 2027-12-23 → 2027-12-19 (-4d) | 2027-12-26 → 2027-12-21 (-5d) | -197d → -193d |
| RHD4CSWL1B07D161105 | Cable Tray Installation for LV Cables 4Cx10 mm²- (B7.26 05 19.03)-SWL1-B07-D16 | 2027-12-27 → 2027-12-25 (-2d) | 2028-01-01 → 2027-12-28 (-4d) | -197.02d → -195d |
| RHD4CSWL1B07D161106 | LV Cable Pulling for LV Cables 4Cx10 mm²- (B7.26 05 19.03)-SWL1-B07-D16 | 2028-01-01 → 2027-12-29 (-3d) | 2028-01-04 → 2028-01-01 (-3d) | -197.02d → -195d |
| RHD4CSWL1B07D161107 | LV Cable Termination for LV Cables 4Cx10 mm²- (B7.26 05 19.03)-SWL1-B07-D16 | 2028-01-04 → 2028-01-02 (-2d) | 2028-01-09 → 2028-01-05 (-4d) | -197.02d → -195d |
| 51 | **RHD4-02-002-SWL1-B07-Electrical Works-4Cx 95mm2 + 1Cx50mm2 Cu/XLPE/PVC** | 2027-12-29 → 2027-12-25 (-4d) | 2028-01-11 → 2028-01-08 (-3d) |  |
| RHD4CSWL1B07D161108 | Electrical Conduits and Pull Box Installation for LV Cables 4Cx10 mm²+1Cx10 mm²- (B7.26 05 19.05)-SWL1-B07-D16 | 2027-12-29 → 2027-12-25 (-4d) | 2028-01-01 → 2027-12-27 (-5d) | -198d → -194d |
| RHD4CSWL1B07D161109 | Cable Tray Installation for LV Cables 4Cx10 mm²+1Cx10 mm²- (B7.26 05 19.05)-SWL1-B07-D16 | 2028-01-02 → 2027-12-28 (-5d) | 2028-01-05 → 2028-01-01 (-4d) | -198d → -194d |
| RHD4CSWL1B07D161110 | LV Cable Pulling for LV Cables 4Cx10 mm²+1Cx10 mm²- (B7.26 05 19.05)-SWL1-B07-D16 | 2028-01-06 → 2028-01-02 (-4d) | 2028-01-09 → 2028-01-04 (-5d) | -198d → -194d |
| RHD4CSWL1B07D161111 | LV Cable Termination for LV Cables 4Cx10 mm²+1Cx10 mm²- (B7.26 05 19.05)-SWL1-B07-D16 | 2028-01-10 → 2028-01-06 (-4d) | 2028-01-11 → 2028-01-08 (-3d) | -198d → -195d |
| 53 | **RHD4-02-002-SWL1-B07-Electrical Works-Wiring Devices** | 2028-01-12 → 2028-01-09 (-3d) | 2028-01-20 → 2028-01-17 (-3d) |  |
| RHD4CSWL1B07D161116 | 13A Signle Socket Outlet WP for Wiring Devices - (B7.26 27 26 .01)-SWL1-B07-D16 | 2028-01-12 → 2028-01-09 (-3d) | 2028-01-15 → 2028-01-11 (-4d) | -198d → -195d |
| RHD4CSWL1B07D161117 | 13A Double Socket Outlet WP for Wiring Devices - (B7.26 27 26 .02)-SWL1-B07-D16 | 2028-01-16 → 2028-01-12 (-4d) | 2028-01-17 → 2028-01-13 (-4d) | -198d → -195d |
| RHD4CSWL1B07D161118 | 25A Switch Socket Outlet (for Split Unit), WP for Wiring Devices - (B7.26 27 26 .03)-SWL1-B07-D16 | 2028-01-18 → 2028-01-15 (-3d) | 2028-01-20 → 2028-01-17 (-3d) | -198d → -195d |
| 54 | **RHD4-02-002-SWL1-B07-Electrical Works-Grounding and Bonding** | 2028-01-18 → 2028-01-15 (-3d) | 2028-02-01 → 2028-01-29 (-3d) |  |
| RHD4CSWL1B07D161119 | Copper Conductor Connecting to Steel Rebar Installation for Copper Rods - (B7.26 05 26.01)-SWL1-B07-D16 | 2028-01-18 → 2028-01-15 (-3d) | 2028-01-22 → 2028-01-18 (-4d) | -198d → -195d |
| RHD4CSWL1B07D161120 | Earth pits Installation for Copper Rods - (B7.26 05 26.01)-SWL1-B07-D16 | 2028-01-23 → 2028-01-19 (-4d) | 2028-01-26 → 2028-01-23 (-3d) | -198d → -195d |
| RHD4CSWL1B07D161121 | Earth Bars Installation for Copper Rods - (B7.26 05 26.01)-SWL1-B07-D16 | 2028-01-27 → 2028-01-24 (-3d) | 2028-01-29 → 2028-01-25 (-4d) | -198d → -195d |
| RHD4CSWL1B07D161122 | Copper Tape on Roof Installation for Copper Rods - (B7.26 05 26.01)-SWL1-B07-D16 | 2028-01-30 → 2028-01-26 (-4d) | 2028-02-01 → 2028-01-29 (-3d) | -198d → -195d |
| 55 | **RHD4-02-002-SWL1-B07-Electrical Works-Indoor Lighting Fixtures** | 2028-01-30 → 2028-01-26 (-4d) | 2028-02-15 → 2028-02-12 (-3d) |  |
| RHD4CSWL1B07D161123 | Electrical Conduits and Pull Box Installation - 24.5 W for Lighting Fixtures - (Indoor Lighting Fixtures )-SWL1-B07-D16 | 2028-01-30 → 2028-01-26 (-4d) | 2028-02-01 → 2028-01-29 (-3d) | -196d → -193d |
| RHD4CSWL1B07D161124 | LV Cable Pulling for Lighting Fixtures - (B7.26 51 00.01)-SWL1-B07-D16 | 2028-02-02 → 2028-01-30 (-3d) | 2028-02-05 → 2028-02-01 (-4d) | -196d → -193d |
| RHD4CSWL1B07D161126 | Electrical Conduits and Pull Box Installation - 8 W for Lighting Fixtures - (B7.26 51 00.02)-SWL1-B07-D16 | 2028-02-02 → 2028-01-30 (-3d) | 2028-02-05 → 2028-02-01 (-4d) | -196d → -193d |
| RHD4CSWL1B07D161125 | Lighting Fixture Installation for Lighting Fixtures - (B7.26 51 00.01)-SWL1-B07-D16 | 2028-02-06 → 2028-02-02 (-4d) | 2028-02-09 → 2028-02-06 (-3d) | -196d → -193d |
| RHD4CSWL1B07D161127 | LV Cable Pulling for Lighting Fixtures - (B7.26 51 00.02)-SWL1-B07-D16 | 2028-02-06 → 2028-02-02 (-4d) | 2028-02-09 → 2028-02-06 (-3d) | -196d → -193d |
| RHD4CSWL1B07D161128 | Lighting Fixture Installation for Lighting Fixtures - (B7.26 51 00.02)-SWL1-B07-D16 | 2028-02-10 → 2028-02-07 (-3d) | 2028-02-15 → 2028-02-12 (-3d) | -196d → -193d |
| 56 | **RHD4-02-002-SWL1-B07-Electrical Works-Outdoor Lighting Fixtures** | 2028-02-12 → 2028-02-07 (-5d) | 2028-03-06 → 2028-03-01 (-5d) |  |
| RHD4CSWL1B07D161129 | Electrical Conduits and Pull Box Installation - 7 W for Lighting Fixtures - (Outdoor Lighting Fixtures )-SWL1-B07-D16 | 2028-02-12 → 2028-02-07 (-5d) | 2028-02-15 → 2028-02-10 (-5d) | -188d → -184d |
| RHD4CSWL1B07D161130 | LV Cable Pulling for Lighting Fixtures - (B7.26 56 00.01)-SWL1-B07-D16 | 2028-02-16 → 2028-02-12 (-4d) | 2028-02-19 → 2028-02-14 (-5d) | -185d → -181d |
| RHD4CSWL1B07D161132 | Electrical Conduits and Pull Box Installation - 42.5 W for Lighting Fixtures - (B7.26 56 00.02)-SWL1-B07-D16 | 2028-02-16 → 2028-02-12 (-4d) | 2028-02-20 → 2028-02-15 (-5d) | -188d → -184d |
| RHD4CSWL1B07D161131 | Lighting Fixture Installation for Lighting Fixtures - (B7.26 56 00.01)-SWL1-B07-D16 | 2028-02-20 → 2028-02-15 (-5d) | 2028-02-23 → 2028-02-17 (-6d) | -185d → -181d |
| RHD4CSWL1B07D161133 | LV Cable Pulling for Lighting Fixtures - (B7.26 56 00.02)-SWL1-B07-D16 | 2028-02-21 → 2028-02-16 (-5d) | 2028-03-01 → 2028-02-21 (-9d) | -188d → -184d |
| RHD4CSWL1B07D161134 | Lighting Fixture Installation for Lighting Fixtures - (B7.26 56 00.02)-SWL1-B07-D16 | 2028-03-02 → 2028-02-23 (-8d) | 2028-03-06 → 2028-03-01 (-5d) | -188d → -184d |
| 57 | **RHD4-02-002-SWL1-B07-Electrical Works- Enclosed Switches and Circuit Breakers** | 2028-01-30 → 2028-01-26 (-4d) | 2028-02-10 → 2028-02-07 (-3d) |  |
| RHD4CSWL1B07D161135 | 25-amp single-pole disconnect switches for Lighting Fixtures - (B7.26 28 16.01)-SWL1-B07-D16 | 2028-01-30 → 2028-01-26 (-4d) | 2028-02-01 → 2028-01-29 (-3d) | -198d → -195d |
| RHD4CSWL1B07D161136 | 25-amp three-pole disconnect switches for Lighting Fixtures - (B7.26 28 16.02)-SWL1-B07-D16 | 2028-02-02 → 2028-01-30 (-3d) | 2028-02-06 → 2028-02-02 (-4d) | -198d → -195d |
| RHD4CSWL1B07D161137 | 125-amp three-pole disconnect switches for Lighting Fixtures - (B7.26 28 16.03)-SWL1-B07-D16 | 2028-02-07 → 2028-02-03 (-4d) | 2028-02-10 → 2028-02-07 (-3d) | -198d → -195d |
| 58 | **RHD4-02-002-SWL1-B07-Electrical Works-Secondery Panel Boards** | 2028-02-07 → 2028-02-03 (-4d) | 2028-02-21 → 2028-02-17 (-4d) |  |
| RHD4CSWL1B07D161138 | Panel "DB-U3" Installation for Panelboards - (B7.26 24 16.01)-SWL1-B07-D16 | 2028-02-07 → 2028-02-03 (-4d) | 2028-02-08 → 2028-02-05 (-3d) | -198d → -195d |
| RHD4CSWL1B07D161139 | Panel "DB-U3" Termination for Panelboards - (B7.26 24 16.01)-SWL1-B07-D16 | 2028-02-09 → 2028-02-06 (-3d) | 2028-02-13 → 2028-02-09 (-4d) | -198d → -195d |
| RHD4CSWL1B07D161140 | Panel "LPP-UT-3" Installation for Panelboards - (B7.26 24 16.02)-SWL1-B07-D16 | 2028-02-14 → 2028-02-10 (-4d) | 2028-02-17 → 2028-02-14 (-3d) | -198d → -195d |
| RHD4CSWL1B07D161141 | Panel "DB-UT-3" Termination for Panelboards - (B7.26 24 16.02)-SWL1-B07-D16 | 2028-02-19 → 2028-02-15 (-4d) | 2028-02-21 → 2028-02-17 (-4d) | -198d → -195d |
| 60 | **RHD4-02-002-SWL1-B07-Electrical Works-Addressable Fire-Alarm System** | 2028-02-19 → 2028-02-15 (-4d) | 2028-03-15 → 2028-03-12 (-3d) |  |
| RHD4CSWL1B07D161145 | 1 loop FACP with charger, battries and auto dialer for Fire Alarm - (B7.28 46 00.01)-SWL1-B07-D16 | 2028-02-19 → 2028-02-15 (-4d) | 2028-02-23 → 2028-02-19 (-4d) | -198d → -195d |
| RHD4CSWL1B07D161146 | Addressable type fire alarm Photoelectric smoke detector complete for Fire Alarm - (B7.28 46 00.05)-SWL1-B07-D16 | 2028-02-24 → 2028-02-20 (-4d) | 2028-03-02 → 2028-02-24 (-7d) | -198d → -195d |
| RHD4CSWL1B07D161147 | Addressable type fire alarm manual call station/pull station for Fire Alarm - (B7.28 46 00.06)-SWL1-B07-D16 | 2028-03-04 → 2028-02-26 (-7d) | 2028-03-06 → 2028-03-02 (-4d) | -198d → -195d |
| RHD4CSWL1B07D161148 | Conventional 24V DC fire alarm wall mounted 15cd flasher/strobe. for Fire Alarm - (B7.28 46 00.07)-SWL1-B07-D16 | 2028-03-07 → 2028-03-04 (-3d) | 2028-03-09 → 2028-03-06 (-3d) | -198d → -195d |
| RHD4CSWL1B07D161149 | Conventional 24V DC fire alarm wall mounted 15cd flasher weather proof for Fire Alarm - (B7.28 46 00.08)-SWL1-B07-D16 | 2028-03-11 → 2028-03-07 (-4d) | 2028-03-13 → 2028-03-09 (-4d) | -198d → -195d |
| RHD4CSWL1B07D161150 | Short CCT Isolator. for Fire Alarm - (B7.28 46 00.09)-SWL1-B07-D16 | 2028-03-14 → 2028-03-11 (-3d) | 2028-03-15 → 2028-03-12 (-3d) | -198d → -195d |
| 61 | **RHD4-02-002-SWL1-B07-Electrical Works-Main Motor Control Center (MCC)** | 2028-03-14 → 2028-03-11 (-3d) | 2028-03-20 → 2028-03-16 (-4d) |  |
| RHD4CSWL1B07D161151 | Installation for MCC-3 - (B7.26 29 00.01)-SWL1-B07-D16 | 2028-03-14 → 2028-03-11 (-3d) | 2028-03-18 → 2028-03-14 (-4d) | -198d → -195d |
| RHD4CSWL1B07D161152 | Termination for MCC-3 - (B7.26 29 00.01)-SWL1-B07-D16 | 2028-03-19 → 2028-03-15 (-4d) | 2028-03-20 → 2028-03-16 (-4d) | -198d → -195d |
| 62 | **RHD4-02-002-SWL1-B07-Electrical Works-Programmable Logic Controllers** | 2028-03-19 → 2028-03-15 (-4d) | 2028-03-26 → 2028-03-22 (-4d) |  |
| RHD4CSWL1B07D161153 | PLC System Installation for - (B7.40 63 43.01)-SWL1-B07-D16 | 2028-03-19 → 2028-03-15 (-4d) | 2028-03-21 → 2028-03-18 (-3d) | -198d → -195d |
| RHD4CSWL1B07D161154 | Process Control Wiring Installation for - (B7.40 67 10.01)-SWL1-B07-D16 | 2028-03-19 → 2028-03-15 (-4d) | 2028-03-21 → 2028-03-18 (-3d) | -198d → -195d |
| RHD4CSWL1B07D161155 | Instrumentation for Process Systems for - (B7.40 70 00.01)-SWL1-B07-D16 | 2028-03-22 → 2028-03-19 (-3d) | 2028-03-26 → 2028-03-22 (-4d) | -198d → -195d |
| 5 | **RHD4-02-002-Sewage Lift Station 01-Wet Well Structure And Valve Chamber** |  | 2027-12-06 → 2027-12-02 (-4d) |  |
| 16 | **RHD4-02-002-SWL1-B07-Pump Lifting System** | 2027-11-01 → 2027-10-30 (-2d) | 2027-12-06 → 2027-12-02 (-4d) |  |
| 17 | **RHD4-02-002-SWL1-B07-Ductile Pipe Connection and Fittings-Pipes, Fittings & Appurtenances** | 2027-11-01 → 2027-10-30 (-2d) | 2027-11-18 → 2027-11-15 (-3d) |  |
| RHD4CSWL1B07D151027 | Buried ductile iron pipes with diameter 400 mm Installation - (B7.22 11 13.03)-SWL1-B07-D15 | 2027-11-01 → 2027-10-30 (-2d) | 2027-11-06 → 2027-11-02 (-4d) | -154.02d → -152d |
| RHD4CSWL1B07D151029 | Buried ductile iron pipes with diameter 250 mm Installation - (B7.22 11 13.05)-SWL1-B07-D15 | 2027-11-06 → 2027-11-03 (-3d) | 2027-11-11 → 2027-11-08 (-3d) | -154.02d → -152d |
| RHD4CSWL1B07D151030 | Double flanged ductile iron pipe with diameter 250 mm Installation - (B7.22 11 13.06)-SWL1-B07-D15 | 2027-11-11 → 2027-11-09 (-2d) | 2027-11-18 → 2027-11-15 (-3d) | -154.02d → -152d |
| 18 | **RHD4-02-002-SWL1-B07-Ductile Pipe Connection and Fittings-Isolation Penstock** | 2027-11-18 → 2027-11-16 (-2d) | 2027-12-01 → 2027-11-28 (-3d) |  |
| RHD4CSWL1B07D151031 | Install Electrically operated penstock 500 * 500 mm - (B7.35 21 23.01)-SWL1-B07-D15 | 2027-11-18 → 2027-11-16 (-2d) | 2027-12-01 → 2027-11-28 (-3d) | -154.02d → -152d |
| 19 | **RHD4-02-002-SWL1-B07-Ductile Pipe Connection and Fittings-JIB Crane** | 2027-12-01 → 2027-11-29 (-2d) | 2027-12-06 → 2027-12-02 (-4d) |  |
| RHD4CSWL1B07D151032 | Install JIB Crane For storm and sewer pumping Stations - (B7.41 22 10.01)-SWL1-B07-D15 | 2027-12-01 → 2027-11-29 (-2d) | 2027-12-06 → 2027-12-02 (-4d) | -154.02d → -152d |
| 6 | **RHD4-02-002-SWL1-B07-Wet Well Structure And Valve Chamber** |  | 2027-11-01 → 2027-10-28 (-4d) |  |
| 10 | **RHD4-02-002-SWL1-B07-WET WELL-Metal Doors** | 2027-09-11 → 2027-09-08 (-3d) | 2027-09-18 → 2027-09-14 (-4d) |  |
| RHD4CSWL1B07D051014 | metal floor door size (1000x1000mm) for Wet well structure - (B7.08 31 13.04)-SWL1-B07-D05 | 2027-09-11 → 2027-09-08 (-3d) | 2027-09-18 → 2027-09-14 (-4d) | -154.02d → -152d |
| 11 | **RHD4-02-002-SWL1-B07-WET WELL-Screening Container** | 2027-09-18 → 2027-09-15 (-3d) | 2027-09-26 → 2027-09-21 (-5d) |  |
| RHD4CSWL1B07D151016 | Steel Container Screening Installation - (B7.46 21 00.01)-SWL1-B07-D15 | 2027-09-18 → 2027-09-15 (-3d) | 2027-09-26 → 2027-09-21 (-5d) | -154.02d → -152d |

| ID | Task | Start | Finish | Total float |
| --- | --- | --- | --- | --- |
| 12 | **RHD4-02-002-SWL1-B07-WET WELL-Motorized basket screen** | 2027-09-26 → 2027-09-22 (-4d) | 2027-10-11 → 2027-10-07 (-4d) |  |
| RHD4CSWL1B07D151017 | Basket Screen Frame Mounting - (B7.46 21 00.01)-SWL1-B07-D15 | 2027-09-26 → 2027-09-22 (-4d) | 2027-09-30 → 2027-09-27 (-3d) | -154.02d → -152d |
| RHD4CSWL1B07D151018 | Basket Screen Alignment - (B7.46 21 01.01)-SWL1-B07-D15 | 2027-09-30 → 2027-09-28 (-2d) | 2027-10-06 → 2027-10-03 (-3d) | -154.02d → -152d |
| RHD4CSWL1B07D151019 | Motor and Drive System Installation - (B7.46 21 01.01)-SWL1-B07-D15 | 2027-10-06 → 2027-10-04 (-2d) | 2027-10-11 → 2027-10-07 (-4d) | -154.02d → -152d |
| 13 | **RHD4-02-002-SWL1-B07-WET WELL-Pumps** | 2027-10-11 → 2027-10-09 (-2d) | 2027-10-23 → 2027-10-19 (-4d) |  |
| RHD4CSWL1B07D151021 | Constant Speed Submersible pump Installation - 53 lps - (B7. 22 14 29.16.02)-SWL1-B07-D15 | 2027-10-11 → 2027-10-09 (-2d) | 2027-10-23 → 2027-10-19 (-4d) | -154.02d → -152d |
| 14 | **RHD4-02-002-SWL1-B07-WET WELL-Gate Valves** | 2027-10-23 → 2027-10-20 (-3d) | 2027-11-01 → 2027-10-28 (-4d) |  |
| RHD4CSWL1B07D151023 | Manually operated Gate Valve DN250 for - (B7.22 05 23.02)-SWL1-B07-D15 | 2027-10-23 → 2027-10-20 (-3d) | 2027-11-01 → 2027-10-28 (-4d) | -154.02d → -152d |
| 7 | **RHD4-02-002-SWL1-B07-WET WELL-Concrete works** |  | 2027-08-05 → 2027-08-02 (-3d) |  |
| RHD4CSWL1B07D021003 | Water proofing membrance for Wet well structure - (B7.07 13 13.01)-SWL1-B07-D02 | 2027-04-24 → 2027-04-25 (+1d) | 2027-04-25 → 2027-04-26 (+1d) | -146d → -147d |
| RHD4CSWL1B07D021004 | Screed for Wet well structure - (B7.03 00 00 .04)-SWL1-B07-D02 | 2027-04-26 → 2027-04-27 (+1d) | 2027-04-29 → 2027-05-01 (+2d) | -146d → -147d |
| RHD4CSWL1B07D021005 | Steel Fixing for Wet well structure - (B7.03 00 00 .05)-SWL1-B07-D02 | 2027-07-11 → 2027-07-12 (+1d) | 2027-07-19 → 2027-07-20 (+1d) | -150d → -151d |
| RHD4CSWL1B07D021006 | Formwork for Wet well structure - (B7.03 00 00 .05)-SWL1-B07-D02 | 2027-07-20 → 2027-07-21 (+1d) | 2027-07-26 → 2027-07-27 (+1d) | -150d → -151d |
| RHD4CSWL1B07D021007 | RC Casting for Wet well structure - (B7.03 00 00 .05)-SWL1-B07-D02 | 2027-08-01 → 2027-07-29 (-3d) | 2027-08-05 → 2027-08-02 (-3d) | -154.02d → -152d |
| 8 | **RHD4-02-002-SWL1-B07-WET WELL-Retaining Walls & Slab** | 2027-08-05 → 2027-08-03 (-2d) | 2027-09-05 → 2027-09-01 (-4d) |  |
| RHD4CSWL1B07D021008 | Steel Fixing for Wet well structure - (B7.03 00 00 .07)-SWL1-B07-D02 | 2027-08-05 → 2027-08-03 (-2d) | 2027-08-15 → 2027-08-11 (-4d) | -154.02d → -152d |
| RHD4CSWL1B07D021009 | Formwork for Wet well structure - (B7.03 00 00 .07)-SWL1-B07-D02 | 2027-08-15 → 2027-08-12 (-3d) | 2027-08-21 → 2027-08-17 (-4d) | -154.02d → -152d |
| RHD4CSWL1B07D021010 | RC Casting for Wet well structure - (B7.03 00 00 .07)-SWL1-B07-D02 | 2027-08-21 → 2027-08-18 (-3d) | 2027-08-31 → 2027-08-28 (-3d) | -154.02d → -152d |
| RHD4CSWL1B07D021011 | Water protection Board membrance for Wet well structure - (B7.07 13 13.02)-SWL1-B07-D02 | 2027-08-31 → 2027-08-29 (-2d) | 2027-09-05 → 2027-09-01 (-4d) | -154.02d → -152d |
| 9 | **RHD4-02-002-SWL1-B07-WET WELL-Finishes** | 2027-09-05 → 2027-09-02 (-3d) | 2027-09-11 → 2027-09-07 (-4d) |  |
| RHD4CSWL1B07D091012 | Epoxy Coating for Wet well structure - (B7.09 96 56.01)-SWL1-B07-D09 | 2027-09-05 → 2027-09-02 (-3d) | 2027-09-11 → 2027-09-07 (-4d) | -154.02d → -152d |
| 63 | **RHD4-02-002-Sewage Lift Station 01-Site Works** | 2027-12-26 → 2027-12-21 (-5d) | 2028-04-09 → 2028-04-05 (-4d) |  |
| 64 | **RHD4-02-002-SWL1-B07-FENCE & GATES** | 2027-12-26 → 2027-12-21 (-5d) | 2028-01-15 → 2028-01-10 (-5d) |  |
| 65 | **RHD4-02-002-SWL1-B07-FENCE & GATES-Perimeter Fencing** | 2027-12-26 → 2027-12-21 (-5d) | 2028-01-10 → 2028-01-05 (-5d) |  |
| RHD4CSWL1B07D101158 | Chain Link Fence - North Side Installation - (B1.32 31 00.01)-SWL1-B07-D10 | 2027-12-26 → 2027-12-21 (-5d) | 2027-12-28 → 2027-12-23 (-5d) | -197d → -193d |
| RHD4CSWL1B07D101159 | Chain Link Fence - South Side Installation - (B1.32 31 00.01)-SWL1-B07-D10 | 2027-12-29 → 2027-12-25 (-4d) | 2028-01-01 → 2027-12-27 (-5d) | -185d → -181d |
| RHD4CSWL1B07D101160 | Chain Link Fence - West Side Installation - (B1.32 31 00.01)-SWL1-B07-D10 | 2028-01-02 → 2027-12-28 (-5d) | 2028-01-05 → 2028-01-01 (-4d) | -185d → -181d |
| RHD4CSWL1B07D101161 | Chain Link Fence - East Side Installation - (B1.32 31 00.01)-SWL1-B07-D10 | 2028-01-06 → 2028-01-02 (-4d) | 2028-01-10 → 2028-01-05 (-5d) | -185d → -181d |
| 66 | **RHD4-02-002-SWL1-B07-FENCE & GATES-Entrance Gates** | 2028-01-11 → 2028-01-06 (-5d) | 2028-01-15 → 2028-01-10 (-5d) |  |
| RHD4CSWL1B07D101162 | Main Entrance Gate Installation - (B1.32 31 00.01)-SWL1-B07-D10 | 2028-01-11 → 2028-01-06 (-5d) | 2028-01-15 → 2028-01-10 (-5d) | -185d → -181d |
| 67 | **RHD4-02-002-SWL1-B07-FLOW METER CHAMABER** | 2028-01-11 → 2028-01-06 (-5d) | 2028-04-01 → 2028-03-28 (-4d) |  |
| 68 | **RHD4-02-002-SWL1-B07-FLOW METER CHAMABER-Concrete works** | 2028-01-11 → 2028-01-06 (-5d) | 2028-02-01 → 2028-01-27 (-5d) |  |
| RHD4CSWL1B07D031165 | Lean Concrete 100mm - (B7.03 00 00 .01)-SWL1-B07-D03 | 2028-01-11 → 2028-01-06 (-5d) | 2028-01-13 → 2028-01-09 (-4d) | -185d → -181d |
| RHD4CSWL1B07D031166 | Water proofing membrance Bituminous Sheet - (B7.07 13 13.01)-SWL1-B07-D03 | 2028-01-15 → 2028-01-10 (-5d) | 2028-01-18 → 2028-01-13 (-5d) | -185d → -181d |
| RHD4CSWL1B07D031167 | Screed 50mm - (B7.03 00 00 .04)-SWL1-B07-D03 | 2028-01-19 → 2028-01-15 (-4d) | 2028-01-23 → 2028-01-18 (-5d) | -185d → -181d |
| RHD4CSWL1B07D031168 | Steel Fixing - (B7.03 00 00 .05)-SWL1-B07-D03 | 2028-01-24 → 2028-01-19 (-5d) | 2028-01-26 → 2028-01-22 (-4d) | -185d → -181d |
| RHD4CSWL1B07D031169 | Formwork - (B7.03 00 00 .05)-SWL1-B07-D03 | 2028-01-27 → 2028-01-23 (-4d) | 2028-01-30 → 2028-01-25 (-5d) | -185d → -181d |
| RHD4CSWL1B07D031170 | RC Casting Fluid-Applied - (B7.03 00 00 .05)-SWL1-B07-D03 | 2028-01-31 → 2028-01-26 (-5d) | 2028-02-01 → 2028-01-27 (-5d) | -185d → -181d |
| 69 | **RHD4-02-002-SWL1-B07-FLOW METER CHAMABER-Retaining Walls & Slab** | 2028-02-02 → 2028-01-29 (-4d) | 2028-02-17 → 2028-02-13 (-4d) |  |
| RHD4CSWL1B07D031171 | Steel Fixing - (B7.03 00 00 .07)-SWL1-B07-D03 | 2028-02-02 → 2028-01-29 (-4d) | 2028-02-05 → 2028-01-31 (-5d) | -185d → -181d |
| RHD4CSWL1B07D031172 | Formwork - (B7.03 00 00 .07)-SWL1-B07-D03 | 2028-02-06 → 2028-02-01 (-5d) | 2028-02-08 → 2028-02-03 (-5d) | -185d → -181d |
| RHD4CSWL1B07D031173 | RC Casting - (B7.03 00 00 .07)-SWL1-B07-D03 | 2028-02-09 → 2028-02-05 (-4d) | 2028-02-13 → 2028-02-08 (-5d) | -185d → -181d |
| RHD4CSWL1B07D031174 | Water protection Board membrance Fluid-Applied - (B7.07 14 00.01)-SWL1-B07-D03 | 2028-02-14 → 2028-02-09 (-5d) | 2028-02-17 → 2028-02-13 (-4d) | -185d → -181d |
| 70 | **RHD4-02-002-SWL1-B07-FLOW METER CHAMABER-Magnetic type flowmeter Installation** | 2028-02-19 → 2028-02-14 (-5d) | 2028-03-11 → 2028-03-06 (-5d) |  |
| RHD4CSWL1B07D151175 | Flow meter installation 250mm - (B7.22 05 19.02)-SWL1-B07-D15 | 2028-02-19 → 2028-02-14 (-5d) | 2028-02-21 → 2028-02-16 (-5d) | -185d → -181d |
| RHD4CSWL1B07D151176 | UPVC Conduits 1 inch UPVC - (B7.22 05 19.02)-SWL1-B07-D15 | 2028-02-23 → 2028-02-17 (-6d) | 2028-02-26 → 2028-02-20 (-6d) | -185d → -181d |
| RHD4CSWL1B07D151177 | Electrical power and cable connection - (B7.22 05 19.02)-SWL1-B07-D15 | 2028-03-01 → 2028-02-21 (-9d) | 2028-03-06 → 2028-03-01 (-5d) | -185d → -181d |
| RHD4CSWL1B07D151178 | Flow meter Panel Integration and connection - (B7.22 05 19.02)-SWL1-B07-D15 | 2028-03-07 → 2028-03-02 (-5d) | 2028-03-11 → 2028-03-06 (-5d) | -185d → -181d |
| 71 | **RHD4-02-002-SWL1-B07-FLOW METER CHAMABER-Non-Return Valve** | 2028-03-27 → 2028-03-23 (-4d) | 2028-04-01 → 2028-03-28 (-4d) |  |
| RHD4CSWL1B07D151180 | Check Valve with diameter 250mm. 250mm - (B7.22 05 24.02)-SWL1-B07-D15 | 2028-03-27 → 2028-03-23 (-4d) | 2028-04-01 → 2028-03-28 (-4d) | -198d → -195d |
| 72 | **RHD4-02-002-SWL1-B07-GENERATOR FOUNDATION** | 2027-12-26 → 2027-12-21 (-5d) | 2028-01-24 → 2028-01-19 (-5d) |  |
| 73 | **RHD4-02-002-SWL1-B07-GENERATOR FOUNDATION-Concrete works** | 2027-12-26 → 2027-12-21 (-5d) | 2028-01-17 → 2028-01-12 (-5d) |  |
| RHD4CSWL1B07D031183 | Lean Concrete 100mm - (B7.03 00 00 .01)-SWL1-B07-D03 | 2027-12-26 → 2027-12-21 (-5d) | 2027-12-27 → 2027-12-22 (-5d) | -197d → -193d |
| RHD4CSWL1B07D031184 | Water proofing membrance Bituminous Sheet - (B7.07 13 13.01)-SWL1-B07-D03 | 2027-12-28 → 2027-12-23 (-5d) | 2027-12-30 → 2027-12-26 (-4d) | -191d → -187d |
| RHD4CSWL1B07D031185 | Screed 50mm - (B7.03 00 00 .04)-SWL1-B07-D03 | 2028-01-01 → 2027-12-27 (-5d) | 2028-01-02 → 2027-12-28 (-5d) | -191d → -187d |
| RHD4CSWL1B07D031186 | Steel Fixing - (B7.03 00 00 .05)-SWL1-B07-D03 | 2028-01-03 → 2027-12-29 (-5d) | 2028-01-05 → 2028-01-01 (-4d) | -191d → -187d |
| RHD4CSWL1B07D031187 | Formwork - (B7.03 00 00 .05)-SWL1-B07-D03 | 2028-01-06 → 2028-01-02 (-4d) | 2028-01-10 → 2028-01-05 (-5d) | -191d → -187d |
| RHD4CSWL1B07D031188 | RC Casting - (B7.03 00 00 .05)-SWL1-B07-D03 | 2028-01-11 → 2028-01-06 (-5d) | 2028-01-12 → 2028-01-08 (-4d) | -191d → -187d |
| RHD4CSWL1B07D031189 | Water protection Board membrance Fluid-Applied - (B7.07 14 00.01)-SWL1-B07-D03 | 2028-01-13 → 2028-01-09 (-4d) | 2028-01-17 → 2028-01-12 (-5d) | -191d → -187d |
| 74 | **RHD4-02-002-SWL1-B07-GENERATOR FOUNDATION-Standby Diesel Generator** | 2028-01-18 → 2028-01-13 (-5d) | 2028-01-24 → 2028-01-19 (-5d) |  |
| RHD4CSWL1B07D151190 | Standby Diesel Generator Set 150 KVA - Installation 150kva - (B7.26 32 12.01)-SWL1-B07-D15 | 2028-01-18 → 2028-01-13 (-5d) | 2028-01-20 → 2028-01-16 (-4d) | -191d → -187d |
| RHD4CSWL1B07D151191 | Automatic Transfer Switch ATS panel 300A - Installation 300A - (B7.26 32 12.02)-SWL1-B07-D15 | 2028-01-22 → 2028-01-17 (-5d) | 2028-01-24 → 2028-01-19 (-5d) | -191d → -187d |
| 75 | **RHD4-02-002-SWL1-B07-SURGE VESSEL** | 2028-01-25 → 2028-01-20 (-5d) | 2028-02-17 → 2028-02-13 (-4d) |  |
| 76 | **RHD4-02-002-SWL1-B07-SURGE VESSEL -Concrete works** | 2028-01-25 → 2028-01-20 (-5d) | 2028-02-17 → 2028-02-13 (-4d) |  |
| RHD4CSWL1B07D031194 | Lean Concrete 100mm - (B7.03 00 00 .01)-SWL1-B07-D03 | 2028-01-25 → 2028-01-20 (-5d) | 2028-01-26 → 2028-01-22 (-4d) | -191d → -187d |
| RHD4CSWL1B07D031195 | Water proofing membrance Bituminous Sheet - (B7.07 13 13.01)-SWL1-B07-D03 | 2028-01-27 → 2028-01-23 (-4d) | 2028-01-30 → 2028-01-25 (-5d) | -191d → -187d |
| RHD4CSWL1B07D031196 | Screed 50mm - (B7.03 00 00 .04)-SWL1-B07-D03 | 2028-01-31 → 2028-01-26 (-5d) | 2028-02-02 → 2028-01-29 (-4d) | -191d → -187d |
| RHD4CSWL1B07D031197 | Steel Fixing - (B7.03 00 00 .05)-SWL1-B07-D03 | 2028-02-03 → 2028-01-30 (-4d) | 2028-02-07 → 2028-02-02 (-5d) | -191d → -187d |
| RHD4CSWL1B07D031198 | Formwork - (B7.03 00 00 .05)-SWL1-B07-D03 | 2028-02-08 → 2028-02-03 (-5d) | 2028-02-12 → 2028-02-07 (-5d) | -191d → -187d |
| RHD4CSWL1B07D031199 | RC Casting - (B7.03 00 00 .05)-SWL1-B07-D03 | 2028-02-13 → 2028-02-08 (-5d) | 2028-02-14 → 2028-02-09 (-5d) | -191d → -187d |

| ID | Task | Start | Finish | Complete | Total float |
| --- | --- | --- | --- | --- | --- |
| RHD4CSWL1B07D031200 | Water protection Board membrance Fluid-Applied - (B7.07 14 00.01)-SWL1-B07-D03 | 2028-02-15 → 2028-02-10 (-5d) | 2028-02-17 → 2028-02-13 (-4d) |  | -191d → -187d |
| 78 | **RHD4-02-002-SWL1-B07-ODOR UNIT** | 2027-12-26 → 2027-12-21 (-5d) | 2028-04-09 → 2028-04-05 (-4d) |  |  |
| 79 | **RHD4-02-002-SWL1-B07-ODOR UNIT-Concrete works** | 2027-12-26 → 2027-12-21 (-5d) | 2028-03-12 → 2028-03-07 (-5d) |  |  |
| RHD4CSWL1B07D031204 | Lean Concrete 100mm - (B7.03 00 00 .01)-SWL1-B07-D03 | 2027-12-26 → 2027-12-21 (-5d) | 2027-12-27 → 2027-12-22 (-5d) |  | -197d → -193d |
| RHD4CSWL1B07D031205 | Water proofing membrance Bituminous Sheet - (B7.07 13 13.01)-SWL1-B07-D03 | 2027-12-28 → 2027-12-23 (-5d) | 2027-12-30 → 2027-12-26 (-4d) |  | -197d → -193d |
| RHD4CSWL1B07D031206 | Screed 50mm - (B7.03 00 00 .04)-SWL1-B07-D03 | 2028-02-19 → 2028-02-14 (-5d) | 2028-02-21 → 2028-02-16 (-5d) |  | -191d → -187d |
| RHD4CSWL1B07D031207 | Steel Fixing - (B7.03 00 00 .05)-SWL1-B07-D03 | 2028-02-23 → 2028-02-17 (-6d) | 2028-03-01 → 2028-02-21 (-9d) |  | -191d → -187d |
| RHD4CSWL1B07D031208 | Formwork - (B7.03 00 00 .05)-SWL1-B07-D03 | 2028-03-02 → 2028-02-23 (-8d) | 2028-03-06 → 2028-03-01 (-5d) |  | -191d → -187d |
| RHD4CSWL1B07D031209 | RC Casting - (B7.03 00 00 .05)-SWL1-B07-D03 | 2028-03-07 → 2028-03-02 (-5d) | 2028-03-08 → 2028-03-04 (-4d) |  | -191d → -187d |
| RHD4CSWL1B07D031210 | Water protection Board membrance Fluid-Applied - (B7.07 14 00.01)-SWL1-B07-D03 | 2028-03-09 → 2028-03-05 (-4d) | 2028-03-12 → 2028-03-07 (-5d) |  | -191d → -187d |
| 80 | **RHD4-02-002-SWL1-B07-ODOR UNIT-Odor Control Unit** | 2028-03-09 → 2028-03-05 (-4d) | 2028-04-09 → 2028-04-05 (-4d) |  |  |
| RHD4CSWL1B07D151211 | Carbon Filter Installation 1110 L/s - (B7.44 30 00.01)-SWL1-B07-D15 | 2028-03-09 → 2028-03-05 (-4d) | 2028-03-13 → 2028-03-08 (-5d) |  | -191d → -187d |
| RHD4CSWL1B07D151212 | Exhaust Fans Installation - (B7.44 30 00.01)-SWL1-B07-D15 | 2028-03-14 → 2028-03-09 (-5d) | 2028-03-18 → 2028-03-13 (-5d) |  | -191d → -187d |
| RHD4CSWL1B07D151213 | Chimeny Stack Installation - (B7.44 30 00.01)-SWL1-B07-D15 | 2028-03-27 → 2028-03-23 (-4d) | 2028-04-01 → 2028-03-28 (-4d) |  | -198d → -195d |
| RHD4CSWL1B07D151214 | Piping Connection 1110 L/s - (B7.44 30 00.01)-SWL1-B07-D15 | 2028-04-02 → 2028-03-29 (-4d) | 2028-04-09 → 2028-04-05 (-4d) |  | -198d → -195d |
| 315 | **Open Channels - CH** | 2027-04-29 → 2026-11-07 (-173d) | 2027-12-23 → 2027-11-03 (-50d) |  |  |
| 316 | **RHD4-02-002-Z1-Open Channels - CH-1** | 2027-04-29 → 2027-04-17 (-12d) | 2027-06-29 → 2027-06-15 (-14d) |  |  |
| 317 | **RHD4-02-002-Z1-Open Channel - ST** | 2027-04-29 → 2027-04-17 (-12d) | 2027-06-29 → 2027-06-15 (-14d) |  |  |
| 318 | **RHD4-02-002-CH1-(ST)-Open Drain Channel** | 2027-04-29 → 2027-04-17 (-12d) | 2027-06-29 → 2027-06-15 (-14d) |  |  |
| RHD4CZ1CH1ST1100 | Channels excavation for Open Channel - (B6.31 23 00.01)-Z1-CH1-ST | 2027-04-29 → 2027-04-17 (-12d) | 2027-05-29 → 2027-05-10 (-19d) |  | -121.02d → -109d |
| RHD4CZ1CH1ST1300 | Loose riprap on the channels bed for Open Channel - (B6.31 37 00.01)-Z1-CH1-ST | 2027-05-29 → 2027-05-11 (-18d) | 2027-06-12 → 2027-05-29 (-14d) |  | -120.02d → -109d |
| RHD4CZ1CH1ST1200 | Grouted riprap on side slopes for Open Channel - (B6.31 37 00.02)-Z1-CH1-ST | 2027-06-12 → 2027-05-30 (-13d) | 2027-06-29 → 2027-06-15 (-14d) |  | -120.02d → -109d |
| 319 | **RHD4-02-002-Z2-Open Channels - CH-4** | 2027-05-29 → 2027-05-11 (-18d) | 2027-06-14 → 2027-05-31 (-14d) |  |  |
| 320 | **RHD4-02-002-Z2-Open Channel - ST** | 2027-05-29 → 2027-05-11 (-18d) | 2027-06-14 → 2027-05-31 (-14d) |  |  |
| 321 | **RHD4-02-002-CH4-(ST)-Open Drain Channel Part 1** | 2027-05-29 → 2027-05-11 (-18d) | 2027-06-14 → 2027-05-31 (-14d) |  |  |
| RHD4CZ2CH4ST1100 | Channels excavation for Open Channel - (B6.31 23 00.01)-Z2-CH4-ST | 2027-05-29 → 2027-05-11 (-18d) | 2027-06-14 → 2027-05-31 (-14d) |  | -121.02d → -98d |
| 1 | **RHD4-02-002-Z3-Open Channels - CH-3** | 2027-06-14 → 2026-11-12 (-214d) | 2027-06-27 → 2026-11-14 (-225d) |  |  |
| 317 | **RHD4-02-002-Z3-Open Channel - ST** | 2027-06-14 → 2026-11-12 (-214d) | 2027-06-27 → 2026-11-14 (-225d) |  |  |
| 318 | **RHD4-02-002-CH3-(ST)-Open Drain Channel** | 2027-06-14 → 2026-11-12 (-214d) | 2027-06-27 → 2026-11-14 (-225d) |  |  |
| RHD4CZ3CH3ST1100 | Channels excavation for Open Channel - (B6.31 23 00.01)-Z3-CH3-ST | 2027-06-14 → 2026-11-12 A (-214d) | 2027-06-27 → 2026-11-14 A (-225d) | 0% → 100% | -121.02d → none |
| 3 | **RHD4-02-002-Z4-Open Channels - CH-5** | 2027-06-27 → 2027-06-01 (-26d) | 2027-10-28 → 2027-10-02 (-26d) |  |  |
| 320 | **RHD4-02-002-Z4-Open Channel - ST** | 2027-06-27 → 2027-06-01 (-26d) | 2027-10-28 → 2027-10-02 (-26d) |  |  |
| 321 | **RHD4-02-002-CH5-(ST)-Open Drain Channel Part 1** | 2027-06-27 → 2027-06-01 (-26d) | 2027-09-08 → 2027-08-12 (-27d) |  |  |
| RHD4CZ4CH5ST1100 | Channels excavation for Open Channel - (B6.31 23 00.01)-Z4-CH5-ST | 2027-06-27 → 2027-06-01 (-26d) | 2027-07-21 → 2027-06-24 (-27d) |  | -121.02d → -98d |
| RHD4CZ4CH5ST1200 | Grouted riprap on side slopes for Open Channel - (B6.31 37 00.02)-Z4-CH5-ST | 2027-07-21 → 2027-06-26 (-25d) | 2027-08-15 → 2027-07-19 (-27d) |  | -78.02d → -56d |
| RHD4CZ4CH5ST1300 | Loose riprap on the channels bed for Open Channel - (B6.31 37 00.01)-Z4-CH5-ST | 2027-08-15 → 2027-07-20 (-26d) | 2027-09-08 → 2027-08-12 (-27d) |  | -78.02d → -56d |
| 322 | **RHD4-02-002-CH5-(ST)-Open Drain Channel Part 2** | 2027-07-21 → 2027-06-26 (-25d) | 2027-10-04 → 2027-09-06 (-28d) |  |  |
| RHD4CZ4CH5ST1110 | Channels excavation for Open Channel - (B6.31 23 00.01)-Z4-CH5-ST | 2027-07-21 → 2027-06-26 (-25d) | 2027-08-15 → 2027-07-19 (-27d) |  | -121.02d → -98d |
| RHD4CZ4CH5ST1210 | Grouted riprap on side slopes for Open Channel - (B6.31 37 00.02)-Z4-CH5-ST | 2027-08-15 → 2027-07-20 (-26d) | 2027-09-08 → 2027-08-12 (-27d) |  | -99.02d → -77d |
| RHD4CZ4CH5ST1310 | Loose riprap on the channels bed for Open Channel - (B6.31 37 00.01)-Z4-CH5-ST | 2027-09-08 → 2027-08-14 (-25d) | 2027-10-04 → 2027-09-06 (-28d) |  | -99.02d → -77d |
| 1 | **RHD4-02-002-CH5-(ST)-Open Drain Channel Part 3** | 2027-08-15 → 2027-07-20 (-26d) | 2027-10-28 → 2027-10-02 (-26d) |  |  |
| RHD4CZ4CH5ST1120 | Channels excavation for Open Channel - (B6.31 23 00.01)-Z4-CH5-ST | 2027-08-15 → 2027-07-20 (-26d) | 2027-09-08 → 2027-08-12 (-27d) |  | -121.02d → -98d |
| RHD4CZ4CH5ST1220 | Grouted riprap on side slopes for Open Channel - (B6.31 37 00.02)-Z4-CH5-ST | 2027-09-08 → 2027-08-14 (-25d) | 2027-10-04 → 2027-09-06 (-28d) |  | -120.02d → -98d |
| RHD4CZ4CH5ST1320 | Loose riprap on the channels bed for Open Channel - (B6.31 37 00.01)-Z4-CH5-ST | 2027-10-04 → 2027-09-07 (-27d) | 2027-10-28 → 2027-10-02 (-26d) |  | -120.02d → -98d |
| 2 | **RHD4-02-002-Z5-Open Channels - CH-2** | 2027-09-08 → 2027-08-14 (-25d) | 2027-09-20 → 2027-08-24 (-27d) |  |  |
| 317 | **RHD4-02-002-Z5-Open Channel - ST** | 2027-09-08 → 2027-08-14 (-25d) | 2027-09-20 → 2027-08-24 (-27d) |  |  |
| 318 | **RHD4-02-002-CH2-(ST)-Open Drain Channel** | 2027-09-08 → 2027-08-14 (-25d) | 2027-09-20 → 2027-08-24 (-27d) |  |  |
| RHD4CZ5CH2ST1100 | Channels excavation for Open Channel - (B6.31 23 00.01)-Z5-CH2-ST | 2027-09-08 → 2027-08-14 (-25d) | 2027-09-20 → 2027-08-24 (-27d) |  | -121.02d → -79d |
| 4 | **RHD4-02-002-Z6-Open Channels - CH-6** | 2027-09-20 → 2026-11-07 (-317d) | 2027-12-23 → 2027-11-03 (-50d) |  |  |
| 320 | **RHD4-02-002-Z6-Open Channel - ST** | 2027-09-20 → 2026-11-07 (-317d) | 2027-12-23 → 2027-11-03 (-50d) |  |  |
| 321 | **RHD4-02-002-CH6-(ST)-Open Drain Channel Part 1** | 2027-09-20 → 2026-11-07 (-317d) | 2027-10-14 → 2026-11-10 (-338d) |  |  |
| RHD4CZ6CH6ST1100 | Channels excavation for Open Channel - (B6.31 23 00.01)-Z6-CH6-ST | 2027-09-20 → 2026-11-07 A (-317d) | 2027-10-14 → 2026-11-10 A (-338d) | 0% → 100% | -121.02d → none |
| 322 | **RHD4-02-002-CH6-(ST)-Open Drain Channel Part 2** | 2027-10-14 → 2027-08-25 (-50d) | 2027-11-07 → 2027-09-16 (-52d) |  |  |
| RHD4CZ6CH6ST1110 | Channels excavation for Open Channel - (B6.31 23 00.01)-Z6-CH6-ST | 2027-10-14 → 2027-08-25 (-50d) | 2027-11-07 → 2027-09-16 (-52d) |  | -121.02d → -79d |
| 1 | **RHD4-02-002-CH6-(ST)-Open Drain Channel Part 3** | 2027-11-07 → 2027-09-18 (-50d) | 2027-11-30 → 2027-10-11 (-50d) |  |  |
| RHD4CZ6CH6ST1120 | Channels excavation for Open Channel - (B6.31 23 00.01)-Z6-CH6-ST | 2027-11-07 → 2027-09-18 (-50d) | 2027-11-30 → 2027-10-11 (-50d) |  | -121.02d → -79d |
| 2 | **RHD4-02-002-CH6-(ST)-Open Drain Channel Part 4** | 2027-11-30 → 2027-10-12 (-49d) | 2027-12-23 → 2027-11-03 (-50d) |  |  |
| RHD4CZ6CH6ST1130 | Channels excavation for Open Channel - (B6.31 23 00.01)-Z6-CH6-ST | 2027-11-30 → 2027-10-12 (-49d) | 2027-12-23 → 2027-11-03 (-50d) |  | -121.02d → -79d |
| 2 | **Provisional Sum** | 2029-01-07 → 2029-01-03 (-4d) | 2029-01-17 → 2029-01-13 (-4d) |  |  |
| A1000 | De-scoping | 2029-01-07 → 2029-01-03 (-4d) | 2029-01-17 → 2029-01-13 (-4d) |  | -232d → -228d |
| 9216 | **RHD4-02-002-Final Testing and Commissioning - FT** | 2027-06-08 → 2027-06-03 (-5d) | 2028-10-26 → 2028-10-23 (-3d) |  |  |
| 9217 | **RHD4-02-002-Final Testing and Commissioning - FT-Z1** | 2027-10-03 → 2027-09-25 (-8d) | 2028-08-13 → 2028-08-05 (-8d) |  |  |
| RHD4GNLVZ1FT1500 | Final Testing and Commissioning for Low Voltage Network - FT-Z1-LV | 2027-10-03 → 2027-09-25 (-8d) | 2027-11-06 → 2027-10-28 (-9d) |  | -190d → -183d |
| RHD4GNSLZ1FT1600 | Final Testing and Commissioning for Street Lighting Network - FT-Z1-SL | 2027-10-31 → 2027-10-23 (-8d) | 2027-12-04 → 2027-11-25 (-9d) |  | -194d → -187d |
| RHD4GNCCTVZ1FT2000 | Final Testing and Commissioning for Security "CCTV" Network - FT-Z1-CCTV | 2028-01-08 → 2027-12-30 (-9d) | 2028-02-10 → 2028-02-02 (-8d) |  | -196d → -189d |
| RHD4GNTCZ1FT1800 | Final Testing and Commissioning for Telecommunications Network - FT-Z1-TC | 2028-04-20 → 2028-04-12 (-8d) | 2028-05-28 → 2028-05-20 (-8d) |  | -166d → -159d |
| RHD4GNICTZ1FT1900 | Final Testing and Commissioning for ICT Network - FT-Z1-ICT | 2028-05-29 → 2028-05-21 (-8d) | 2028-07-02 → 2028-06-24 (-8d) |  | -139d → -132d |
| RHD4GNSTZ1FT1000 | Final Testing and Commissioning for Storm Network - FT-Z1-ST | 2028-05-29 → 2028-05-21 (-8d) | 2028-06-11 → 2028-06-03 (-8d) |  | -166d → -159d |
| RHD4GNIRRZ1FT1300 | Final Testing and Commissioning for Irrigation Network - FT-Z1-IRR | 2028-06-12 → 2028-06-04 (-8d) | 2028-07-16 → 2028-07-08 (-8d) |  | -158d → -151d |
| RHD4GNMVZ1FT1400 | Final Testing and Commissioning for Medium Voltage Network - FT-Z1-MV | 2028-06-12 → 2028-06-04 (-8d) | 2028-07-16 → 2028-07-08 (-8d) |  | -158d → -151d |

| ID | Task | Start | Finish | Total float |
| --- | --- | --- | --- | --- |
| RHD4GNPTZ1FT1200 | Final Testing and Commissioning for Potable Water Network - FT-Z1-PT | 2028-06-12 → 2028-06-04 (-8d) | 2028-07-16 → 2028-07-08 (-8d) | -158d → -151d |
| RHD4GNSWZ1FT1100 | Final Testing and Commissioning for Sewage Network - FT-Z1-SW | 2028-07-10 → 2028-07-02 (-8d) | 2028-08-13 → 2028-08-05 (-8d) | -154d → -147d |
| 9218 | **RHD4-02-002-Final Testing and Commissioning - FT-Z2** | 2027-06-08 → 2027-06-03 (-5d) | 2028-07-23 → 2028-07-15 (-8d) |  |
| RHD4GNLVZ2FT1500 | Final Testing and Commissioning for Low Voltage Network - FT-Z2-LV | 2027-06-08 → 2027-06-03 (-5d) | 2027-07-12 → 2027-07-07 (-5d) | -91d → -87d |
| RHD4GNSLZ2FT1600 | Final Testing and Commissioning for Street Lighting Network - FT-Z2-SL | 2027-11-07 → 2027-11-03 (-4d) | 2027-12-11 → 2027-12-07 (-4d) | -190d → -187d |
| RHD4GNCCTVZ2FT2000 | Final Testing and Commissioning for Security "CCTV" Network - FT-Z2-CCTV | 2028-02-16 → 2028-02-14 (-2d) | 2028-03-27 → 2028-03-23 (-4d) | -134.02d → -132d |
| RHD4GNICTZ2FT1900 | Final Testing and Commissioning for ICT Network - FT-Z2-ICT | 2028-05-29 → 2028-05-21 (-8d) | 2028-07-02 → 2028-06-24 (-8d) | -163d → -156d |
| RHD4GNSTZ2FT1000 | Final Testing and Commissioning for Storm Network - FT-Z2-ST | 2028-05-29 → 2028-05-21 (-8d) | 2028-06-11 → 2028-06-03 (-8d) | -166d → -159d |
| RHD4GNTCZ2FT1800 | Final Testing and Commissioning for Telecommunications Network - FT-Z2-TC | 2028-05-29 → 2028-05-21 (-8d) | 2028-07-02 → 2028-06-24 (-8d) | -140d → -133d |
| RHD4GNIRRZ2FT1300 | Final Testing and Commissioning for Irrigation Network - FT-Z2-IRR | 2028-06-12 → 2028-06-04 (-8d) | 2028-07-16 → 2028-07-08 (-8d) | -158d → -151d |
| RHD4GNMVZ2FT1400 | Final Testing and Commissioning for Medium Voltage Network - FT-Z2-MV | 2028-06-12 → 2028-06-04 (-8d) | 2028-07-16 → 2028-07-08 (-8d) | -158d → -151d |
| RHD4GNPTZ2FT1200 | Final Testing and Commissioning for Potable Water Network - FT-Z2-PT | 2028-06-12 → 2028-06-04 (-8d) | 2028-07-16 → 2028-07-08 (-8d) | -158d → -151d |
| RHD4GNSWZ2FT1100 | Final Testing and Commissioning for Sewage Network - FT-Z2-SW | 2028-07-10 → 2028-07-02 (-8d) | 2028-07-23 → 2028-07-15 (-8d) | -154d → -147d |
| 9219 | **RHD4-02-002-Final Testing and Commissioning - FT-Z3** | 2027-12-11 → 2027-12-06 (-5d) | 2028-10-26 → 2028-10-23 (-3d) |  |
| RHD4GNLVZ3FT1500 | Final Testing and Commissioning for Low Voltage Network - FT-Z3-LV | 2027-12-11 → 2027-12-06 (-5d) | 2027-12-27 → 2027-12-22 (-5d) | -185d → -181d |
| RHD4GNSTZ3FT1000 | Final Testing and Commissioning for Storm Network - FT-Z3-ST | 2028-05-29 → 2028-05-21 (-8d) | 2028-06-11 → 2028-06-03 (-8d) | -146d → -139d |
| RHD4GNIRRZ3FT1300 | Final Testing and Commissioning for Irrigation Network - FT-Z3-IRR | 2028-06-12 → 2028-06-04 (-8d) | 2028-07-16 → 2028-07-08 (-8d) | -158d → -151d |
| RHD4GNMVZ3FT1400 | Final Testing and Commissioning for Medium Voltage Network - FT-Z3-MV | 2028-06-12 → 2028-06-04 (-8d) | 2028-07-16 → 2028-07-08 (-8d) | -158d → -151d |
| RHD4GNPTZ3FT1200 | Final Testing and Commissioning for Potable Water Network - FT-Z3-PT | 2028-06-12 → 2028-06-04 (-8d) | 2028-07-16 → 2028-07-08 (-8d) | -158d → -151d |
| RHD4GNTCZ3FT1800 | Final Testing and Commissioning for Telecommunications Network - FT-Z3-TC | 2028-07-01 → 2028-06-27 (-4d) | 2028-08-03 → 2028-07-31 (-3d) | -174d → -171d |
| RHD4GNSLZ3FT1600 | Final Testing and Commissioning for Street Lighting Network - FT-Z3-SL | 2028-07-05 → 2028-07-02 (-3d) | 2028-08-08 → 2028-08-05 (-3d) | -165d → -162d |
| RHD4GNSWZ3FT1100 | Final Testing and Commissioning for Sewage Network - FT-Z3-SW | 2028-07-10 → 2028-07-02 (-8d) | 2028-07-23 → 2028-07-15 (-8d) | -154d → -147d |
| RHD4GNCCTVZ3FT2000 | Final Testing and Commissioning for Security "CCTV" Network - FT-Z3-CCTV | 2028-08-17 → 2028-08-14 (-3d) | 2028-09-20 → 2028-09-17 (-3d) | -197d → -194d |
| RHD4GNICTZ3FT1900 | Final Testing and Commissioning for ICT Network - FT-Z3-ICT | 2028-09-21 → 2028-09-18 (-3d) | 2028-10-26 → 2028-10-23 (-3d) | -197d → -194d |
| 9220 | **RHD4-02-002-Final Testing and Commissioning - FT-Z4** | 2027-10-16 → 2027-10-13 (-3d) | 2028-07-16 → 2028-07-08 (-8d) |  |
| RHD4GNLVZ4FT1500 | Final Testing and Commissioning for Low Voltage Network - FT-Z4-LV | 2027-10-16 → 2027-10-13 (-3d) | 2027-11-20 → 2027-11-16 (-4d) | -158.02d → -156d |
| RHD4GNSLZ4FT1600 | Final Testing and Commissioning for Street Lighting Network - FT-Z4-SL | 2027-11-08 → 2027-11-06 (-2d) | 2027-12-13 → 2027-12-09 (-4d) | -170.02d → -168d |
| RHD4GNTCZ4FT1800 | Final Testing and Commissioning for Telecommunications Network - FT-Z4-TC | 2027-11-29 → 2027-11-27 (-2d) | 2028-01-03 → 2027-12-30 (-4d) | -107.02d → -105d |
| RHD4GNCCTVZ4FT2000 | Final Testing and Commissioning for Security "CCTV" Network - FT-Z4-CCTV | 2027-12-25 → 2027-12-22 (-3d) | 2028-01-29 → 2028-01-25 (-4d) | -129.02d → -127d |
| RHD4GNICTZ4FT1900 | Final Testing and Commissioning for ICT Network - FT-Z4-ICT | 2028-05-29 → 2028-05-21 (-8d) | 2028-07-02 → 2028-06-24 (-8d) | -163d → -156d |
| RHD4GNSTZ4FT1000 | Final Testing and Commissioning for Storm Network - FT-Z4-ST | 2028-05-29 → 2028-05-21 (-8d) | 2028-06-11 → 2028-06-03 (-8d) | -158d → -151d |
| RHD4GNSWZ4FT1100 | Final Testing and Commissioning for Sewage Network - FT-Z4-SW | 2028-05-29 → 2028-05-21 (-8d) | 2028-06-11 → 2028-06-03 (-8d) | -166d → -159d |
| RHD4GNIRRZ4FT1300 | Final Testing and Commissioning for Irrigation Network - FT-Z4-IRR | 2028-06-12 → 2028-06-04 (-8d) | 2028-07-16 → 2028-07-08 (-8d) | -130d → -123d |
| RHD4GNMVZ4FT1400 | Final Testing and Commissioning for Medium Voltage Network - FT-Z4-MV | 2028-06-12 → 2028-06-04 (-8d) | 2028-07-16 → 2028-07-08 (-8d) | -158d → -151d |
| RHD4GNPTZ4FT1200 | Final Testing and Commissioning for Potable Water Network - FT-Z4-PT | 2028-06-12 → 2028-06-04 (-8d) | 2028-07-16 → 2028-07-08 (-8d) | -126d → -119d |
| 9221 | **RHD4-02-002-Final Testing and Commissioning - FT-Z5** | 2027-09-14 → 2027-09-13 (-1d) | 2028-07-16 → 2028-07-08 (-8d) |  |
| RHD4GNLVZ5FT1500 | Final Testing and Commissioning for Low Voltage Network - FT-Z5-LV | 2027-09-14 → 2027-09-13 (-1d) | 2027-10-20 → 2027-10-18 (-2d) | -148.02d → -147d |
| RHD4GNSLZ5FT1600 | Final Testing and Commissioning for Street Lighting Network - FT-Z5-SL | 2027-12-19 → 2027-12-18 (-1d) | 2028-01-23 → 2028-01-20 (-3d) | -124.02d → -123d |
| RHD4GNTCZ5FT1800 | Final Testing and Commissioning for Telecommunications Network - FT-Z5-TC | 2028-03-16 → 2028-03-08 (-8d) | 2028-04-19 → 2028-04-11 (-8d) | -166d → -159d |
| RHD4GNICTZ5FT1900 | Final Testing and Commissioning for ICT Network - FT-Z5-ICT | 2028-05-29 → 2028-05-21 (-8d) | 2028-07-02 → 2028-06-24 (-8d) | -146d → -139d |
| RHD4GNSTZ5FT1000 | Final Testing and Commissioning for Storm Network - FT-Z5-ST | 2028-05-29 → 2028-05-21 (-8d) | 2028-06-11 → 2028-06-03 (-8d) | -134d → -127d |
| RHD4GNCCTVZ5FT2000 | Final Testing and Commissioning for Security "CCTV" Network - FT-Z5-CCTV | 2028-06-10 → 2028-06-01 (-9d) | 2028-07-13 → 2028-07-05 (-8d) | -147d → -140d |
| RHD4GNIRRZ5FT1300 | Final Testing and Commissioning for Irrigation Network - FT-Z5-IRR | 2028-06-12 → 2028-06-04 (-8d) | 2028-07-16 → 2028-07-08 (-8d) | -146d → -139d |
| RHD4GNMVZ5FT1400 | Final Testing and Commissioning for Medium Voltage Network - FT-Z5-MV | 2028-06-12 → 2028-06-04 (-8d) | 2028-07-16 → 2028-07-08 (-8d) | -146d → -139d |
| RHD4GNPTZ5FT1200 | Final Testing and Commissioning for Potable Water Network - FT-Z5-PT | 2028-06-12 → 2028-06-04 (-8d) | 2028-07-16 → 2028-07-08 (-8d) | -146d → -139d |
| RHD4GNSWZ5FT1100 | Final Testing and Commissioning for Sewage Network - FT-Z5-SW | 2028-06-12 → 2028-06-04 (-8d) | 2028-06-25 → 2028-06-17 (-8d) | -166d → -159d |
| 9222 | **RHD4-02-002-Final Testing and Commissioning - FT-Z6** | 2027-10-09 → 2027-10-06 (-3d) | 2028-07-16 → 2028-07-08 (-8d) |  |
| RHD4GNLVZ6FT1500 | Final Testing and Commissioning for Low Voltage Network - FT-Z6-LV | 2027-10-09 → 2027-10-06 (-3d) | 2027-11-13 → 2027-11-09 (-4d) | -176.02d → -174d |
| RHD4GNSLZ6FT1600 | Final Testing and Commissioning for Street Lighting Network - FT-Z6-SL | 2027-11-06 → 2027-11-03 (-3d) | 2027-12-11 → 2027-12-07 (-4d) | -183.02d → -181d |
| RHD4GNTCZ6FT1800 | Final Testing and Commissioning for Telecommunications Network - FT-Z6-TC | 2027-11-30 → 2027-11-28 (-2d) | 2028-01-04 → 2028-01-01 (-3d) | -191.02d → -189d |
| RHD4GNCCTVZ6FT2000 | Final Testing and Commissioning for Security "CCTV" Network - FT-Z6-CCTV | 2028-01-08 → 2028-01-05 (-3d) | 2028-02-12 → 2028-02-08 (-4d) | -192.02d → -190d |
| RHD4GNICTZ6FT1900 | Final Testing and Commissioning for ICT Network - FT-Z6-ICT | 2028-05-29 → 2028-05-21 (-8d) | 2028-07-02 → 2028-06-24 (-8d) | -130d → -123d |
| RHD4GNSTZ6FT1000 | Final Testing and Commissioning for Storm Network - FT-Z6-ST | 2028-05-29 → 2028-05-21 (-8d) | 2028-06-11 → 2028-06-03 (-8d) | -161d → -154d |
| RHD4GNIRRZ6FT1300 | Final Testing and Commissioning for Irrigation Network - FT-Z6-IRR | 2028-06-12 → 2028-06-04 (-8d) | 2028-07-16 → 2028-07-08 (-8d) | -138d → -131d |
| RHD4GNMVZ6FT1400 | Final Testing and Commissioning for Medium Voltage Network - FT-Z6-MV | 2028-06-12 → 2028-06-04 (-8d) | 2028-07-16 → 2028-07-08 (-8d) | -138d → -131d |
| RHD4GNPTZ6FT1200 | Final Testing and Commissioning for Potable Water Network - FT-Z6-PT | 2028-06-12 → 2028-06-04 (-8d) | 2028-07-02 → 2028-06-24 (-8d) | -158d → -151d |
| RHD4GNSWZ6FT1100 | Final Testing and Commissioning for Sewage Network - FT-Z6-SW | 2028-06-12 → 2028-06-04 (-8d) | 2028-06-25 → 2028-06-17 (-8d) | -154d → -147d |
| 9223 | **RHD4-02-002-Final Testing and Commissioning - FT-Z7** | 2027-12-15 → 2027-12-13 (-2d) | 2028-07-16 → 2028-07-08 (-8d) |  |
| RHD4GNLVZ7FT1500 | Final Testing and Commissioning for Low Voltage Network - FT-Z7-LV | 2027-12-15 → 2027-12-13 (-2d) | 2028-01-19 → 2028-01-16 (-3d) | -184.02d → -182d |
| RHD4GNSLZ7FT1600 | Final Testing and Commissioning for Street Lighting Network - FT-Z7-SL | 2028-01-19 → 2028-01-17 (-2d) | 2028-02-24 → 2028-02-20 (-4d) | -188.02d → -186d |
| RHD4GNTCZ7FT1800 | Final Testing and Commissioning for Telecommunications Network - FT-Z7-TC | 2028-04-20 → 2028-04-12 (-8d) | 2028-05-28 → 2028-05-20 (-8d) | -135d → -128d |
| RHD4GNCCTVZ7FT2000 | Final Testing and Commissioning for Security "CCTV" Network - FT-Z7-CCTV | 2028-04-16 → 2028-04-13 (-3d) | 2028-05-24 → 2028-05-21 (-3d) | -157.02d → -155d |
| RHD4GNICTZ7FT1900 | Final Testing and Commissioning for ICT Network - FT-Z7-ICT | 2028-05-29 → 2028-05-21 (-8d) | 2028-07-02 → 2028-06-24 (-8d) | -163d → -156d |
| RHD4GNSTZ7FT1000 | Final Testing and Commissioning for Storm Network - FT-Z7-ST | 2028-05-29 → 2028-05-21 (-8d) | 2028-06-11 → 2028-06-03 (-8d) | -136d → -129d |
| RHD4GNIRRZ7FT1300 | Final Testing and Commissioning for Irrigation Network - FT-Z7-IRR | 2028-06-12 → 2028-06-04 (-8d) | 2028-07-16 → 2028-07-08 (-8d) | -158d → -151d |
| RHD4GNMVZ7FT1400 | Final Testing and Commissioning for Medium Voltage Network - FT-Z7-MV | 2028-06-12 → 2028-06-04 (-8d) | 2028-07-16 → 2028-07-08 (-8d) | -158d → -151d |
| RHD4GNPTZ7FT1200 | Final Testing and Commissioning for Potable Water Network - FT-Z7-PT | 2028-06-12 → 2028-06-04 (-8d) | 2028-07-16 → 2028-07-08 (-8d) | -158d → -151d |
| RHD4GNSWZ7FT1100 | Final Testing and Commissioning for Sewage Network - FT-Z7-SW | 2028-06-26 → 2028-06-18 (-8d) | 2028-07-09 → 2028-07-01 (-8d) | -154d → -147d |
| 9224 | **RHD4-02-002-Final Testing and Commissioning - FT-Z8** | 2027-09-08 → 2027-09-04 (-4d) | 2028-07-16 → 2028-07-08 (-8d) |  |
| RHD4GNLVZ8FT1500 | Final Testing and Commissioning for Low Voltage Network - FT-Z8-LV | 2027-09-08 → 2027-09-04 (-4d) | 2027-10-14 → 2027-10-09 (-5d) | -121.02d → -117d |

| ID | Task | Start | Finish | Total float |
| --- | --- | --- | --- | --- |
| RHD4GNSLZ8FT1600 | Final Testing and Commissioning for Street Lighting Network - FT-Z8-SL | 2027-10-24 → 2027-10-19 (-5d) | 2027-11-28 → 2027-11-22 (-6d) | -139.02d → -135d |
| RHD4GNCCTVZ8FT2000 | Final Testing and Commissioning for Security "CCTV" Network - FT-Z8-CCTV | 2028-02-21 → 2028-02-16 (-5d) | 2028-04-01 → 2028-03-26 (-6d) | -114.02d → -110d |
| RHD4GNTCZ8FT1800 | Final Testing and Commissioning for Telecommunications Network - FT-Z8-TC | 2028-04-20 → 2028-04-12 (-8d) | 2028-05-28 → 2028-05-20 (-8d) | -140d → -133d |
| RHD4GNICTZ8FT1900 | Final Testing and Commissioning for ICT Network - FT-Z8-ICT | 2028-05-29 → 2028-05-21 (-8d) | 2028-07-02 → 2028-06-24 (-8d) | -163d → -156d |
| RHD4GNSTZ8FT1000 | Final Testing and Commissioning for Storm Network - FT-Z8-ST | 2028-05-29 → 2028-05-21 (-8d) | 2028-06-11 → 2028-06-03 (-8d) | -161d → -154d |
| RHD4GNIRRZ8FT1300 | Final Testing and Commissioning for Irrigation Network - FT-Z8-IRR | 2028-06-12 → 2028-06-04 (-8d) | 2028-07-16 → 2028-07-08 (-8d) | -158d → -151d |
| RHD4GNMVZ8FT1400 | Final Testing and Commissioning for Medium Voltage Network - FT-Z8-MV | 2028-06-12 → 2028-06-04 (-8d) | 2028-07-16 → 2028-07-08 (-8d) | -158d → -151d |
| RHD4GNPTZ8FT1200 | Final Testing and Commissioning for Potable Water Network - FT-Z8-PT | 2028-06-12 → 2028-06-04 (-8d) | 2028-07-16 → 2028-07-08 (-8d) | -158d → -151d |
| RHD4GNSWZ8FT1100 | Final Testing and Commissioning for Sewage Network - FT-Z8-SW | 2028-06-26 → 2028-06-18 (-8d) | 2028-07-09 → 2028-07-01 (-8d) | -152d → -145d |
| 9225 | **RHD4-02-002-Final Testing and Commissioning - FT-Z9** | 2027-12-25 → 2027-12-21 (-4d) | 2028-08-15 → 2028-08-07 (-8d) |  |
| RHD4GNLVZ9FT1500 | Final Testing and Commissioning for Low Voltage Network - FT-Z9-LV | 2027-12-25 → 2027-12-21 (-4d) | 2028-01-29 → 2028-01-24 (-5d) | -113.02d → -110d |
| RHD4GNSLZ9FT1600 | Final Testing and Commissioning for Street Lighting Network - FT-Z9-SL | 2027-12-27 → 2027-12-23 (-4d) | 2028-01-31 → 2028-01-26 (-5d) | -128.02d → -125d |
| RHD4GNTCZ9FT1800 | Final Testing and Commissioning for Telecommunications Network - FT-Z9-TC | 2028-03-18 → 2028-03-15 (-3d) | 2028-04-22 → 2028-04-18 (-4d) | -117.02d → -115d |
| RHD4GNSTZ9FT1000 | Final Testing and Commissioning for Storm Network - FT-Z9-ST | 2028-05-29 → 2028-05-21 (-8d) | 2028-06-11 → 2028-06-03 (-8d) | -161d → -154d |
| RHD4GNIRRZ9FT1300 | Final Testing and Commissioning for Irrigation Network - FT-Z9-IRR | 2028-06-12 → 2028-06-04 (-8d) | 2028-07-16 → 2028-07-08 (-8d) | -158d → -151d |
| RHD4GNMVZ9FT1400 | Final Testing and Commissioning for Medium Voltage Network - FT-Z9-MV | 2028-06-12 → 2028-06-04 (-8d) | 2028-07-16 → 2028-07-08 (-8d) | -158d → -151d |
| RHD4GNPTZ9FT1200 | Final Testing and Commissioning for Potable Water Network - FT-Z9-PT | 2028-06-12 → 2028-06-04 (-8d) | 2028-07-16 → 2028-07-08 (-8d) | -158d → -151d |
| RHD4GNICTZ9FT1900 | Final Testing and Commissioning for ICT Network - FT-Z9-ICT | 2028-06-21 → 2028-06-13 (-8d) | 2028-07-25 → 2028-07-17 (-8d) | -180d → -173d |
| RHD4GNSWZ9FT1100 | Final Testing and Commissioning for Sewage Network - FT-Z9-SW | 2028-06-26 → 2028-06-18 (-8d) | 2028-07-09 → 2028-07-01 (-8d) | -154d → -147d |
| RHD4GNCCTVZ9FT2000 | Final Testing and Commissioning for Security "CCTV" Network - FT-Z9-CCTV | 2028-07-24 → 2028-07-16 (-8d) | 2028-08-15 → 2028-08-07 (-8d) | -178d → -171d |
| 1 | **RHD4-02-002-Final Testing and Commissioning - FT-LFTS** | 2028-04-10 → 2028-04-06 (-4d) | 2028-08-10 → 2028-08-05 (-5d) |  |
| RHD4GNSWL1LFTSFT1000 | Final Testing and Commissioning for Sewage Lift Station 1 - FT-LFTS-SWL1 | 2028-04-10 → 2028-04-06 (-4d) | 2028-05-17 → 2028-05-14 (-3d) | -179d → -176d |
| RHD4GNSTL1LFTSFT1200 | Final Testing and Commissioning for Storm Lift Station 1 - FT-LFTS-STL1 | 2028-08-03 → 2028-07-29 (-5d) | 2028-08-10 → 2028-08-05 (-5d) | -179d → -174d |
| 9226 | **RHD4-02-002-Close Out - HO** | 2027-10-20 → 2027-10-19 (-1d) | 2029-01-17 → 2029-01-14 (-3d) |  |
| 9227 | **RHD4-02-002-As Built Drawings - AS** | 2027-10-20 → 2027-10-19 (-1d) | 2029-01-16 → 2029-01-13 (-3d) |  |
| 9228 | **RHD4-02-002-As Built Drawing Submittals** | 2027-10-20 → 2027-10-19 (-1d) | 2029-01-07 → 2029-01-03 (-4d) |  |
| 9229 | **RHD4-02-002-As Built Drawing Submittals-Z1** | 2028-01-16 → 2028-01-11 (-5d) | 2028-12-10 → 2028-12-06 (-4d) |  |
| RHD4HOASZ1SUBLV160 | Prepare and Submit As-Built Drawings for Low Voltage Network for LV-Z1-SUB | 2028-01-16 → 2028-01-11 (-5d) | 2028-01-24 → 2028-01-19 (-5d) | -183d → -179d |
| RHD4HOASZ1SUBST110 | Prepare and Submit As-Built Drawings for Storm Water Network for ST-Z1-SUB | 2028-07-10 → 2028-07-02 (-8d) | 2028-07-25 → 2028-07-17 (-8d) | -133d → -126d |
| RHD4HOASZ1SUBTC190 | Prepare and Submit As-Built Drawings for Telecommunications Network for TC-Z1-SUB | 2028-08-26 → 2028-08-20 (-6d) | 2028-09-11 → 2028-09-05 (-6d) | -180d → -175d |
| RHD4HOASZ1SUBIRR140 | Prepare and Submit As-Built Drawings for Irrigation Network for IRR-Z1-SUB | 2028-09-02 → 2028-08-24 (-9d) | 2028-09-12 → 2028-09-04 (-8d) | -146d → -139d |
| RHD4HOASZ1SUBMV150 | Prepare and Submit As-Built Drawings for Medium Voltage Network for MV-Z1-SUB | 2028-09-02 → 2028-08-24 (-9d) | 2028-09-10 → 2028-09-02 (-8d) | -146d → -139d |
| RHD4HOASZ1SUBEW100 | Prepare and Submit As-Built Drawings for Road Plans and Profile for EW-Z1-SUB | 2028-09-03 → 2028-08-26 (-8d) | 2028-09-12 → 2028-09-04 (-8d) | -147d → -140d |
| RHD4HOASZ1SUBPT130 | Prepare and Submit As-Built Drawings for Potable Water Network for PT-Z1-SUB | 2028-09-06 → 2028-08-29 (-8d) | 2028-09-14 → 2028-09-06 (-8d) | -146d → -139d |
| RHD4HOASZ1SUBSW120 | Prepare and Submit As-Built Drawings for Sewage Network for SW-Z1-SUB | 2028-09-18 → 2028-09-10 (-8d) | 2028-09-27 → 2028-09-18 (-9d) | -146d → -139d |
| RHD4HOASZ1SUBSL170 | Prepare and Submit As-Built Drawings for Street Lighting Network for SL-Z1-SUB | 2028-09-24 → 2028-09-14 (-10d) | 2028-10-10 → 2028-10-02 (-8d) | -173d → -166d |
| RHD4HOASZ1SUBCCTV210 | Prepare and Submit As-Built Drawings for Security Network for CCTV-Z1-SUB | 2028-10-11 → 2028-10-08 (-3d) | 2028-10-19 → 2028-10-16 (-3d) | -182d → -179d |
| RHD4HOASZ1SUBRD220 | Prepare and Submit As-Built Drawings for Road Works( KERBING AND PAVEMENT ) for RD-Z1-SUB | 2028-11-11 → 2028-11-07 (-4d) | 2028-11-16 → 2028-11-13 (-3d) | -198d → -195d |
| RHD4HOASZ1SUBICT200 | Prepare and Submit As-Built Drawings for Information and Communication Technologies Network for ICT-Z1-SUB | 2028-12-02 → 2028-11-28 (-4d) | 2028-12-10 → 2028-12-06 (-4d) | -197d → -194d |
| 9230 | **RHD4-02-002-As Built Drawing Submittals-Z2** | 2028-01-06 → 2028-01-02 (-4d) | 2028-11-30 → 2028-11-27 (-3d) |  |
| RHD4HOASZ2SUBLV160 | Prepare and Submit As-Built Drawings for Low Voltage Network for LV-Z2-SUB | 2028-01-06 → 2028-01-02 (-4d) | 2028-01-15 → 2028-01-10 (-5d) | -183d → -179d |
| RHD4HOASZ2SUBST110 | Prepare and Submit As-Built Drawings for Storm Water Network for ST-Z2-SUB | 2028-06-26 → 2028-06-18 (-8d) | 2028-07-09 → 2028-07-01 (-8d) | -146d → -139d |
| RHD4HOASZ2SUBTC190 | Prepare and Submit As-Built Drawings for Telecommunications Network for TC-Z2-SUB | 2028-08-19 → 2028-08-13 (-6d) | 2028-08-24 → 2028-08-19 (-5d) | -180d → -175d |
| RHD4HOASZ2SUBEW100 | Prepare and Submit As-Built Drawings for Road Plans and Profile for EW-Z2-SUB | 2028-08-22 → 2028-08-14 (-8d) | 2028-09-02 → 2028-08-24 (-9d) | -147d → -140d |
| RHD4HOASZ2SUBIRR140 | Prepare and Submit As-Built Drawings for Irrigation Network for IRR-Z2-SUB | 2028-08-23 → 2028-08-15 (-8d) | 2028-08-31 → 2028-08-23 (-8d) | -146d → -139d |
| RHD4HOASZ2SUBMV150 | Prepare and Submit As-Built Drawings for Medium Voltage Network for MV-Z2-SUB | 2028-08-23 → 2028-08-15 (-8d) | 2028-08-31 → 2028-08-23 (-8d) | -146d → -139d |
| RHD4HOASZ2SUBPT130 | Prepare and Submit As-Built Drawings for Potable Water Network for PT-Z2-SUB | 2028-08-28 → 2028-08-20 (-8d) | 2028-09-05 → 2028-08-28 (-8d) | -146d → -139d |
| RHD4HOASZ2SUBSL170 | Prepare and Submit As-Built Drawings for Street Lighting Network for SL-Z2-SUB | 2028-09-05 → 2028-08-28 (-8d) | 2028-09-21 → 2028-09-13 (-8d) | -173d → -166d |
| RHD4HOASZ2SUBSW120 | Prepare and Submit As-Built Drawings for Sewage Network for SW-Z2-SUB | 2028-09-11 → 2028-09-03 (-8d) | 2028-09-17 → 2028-09-09 (-8d) | -146d → -139d |
| RHD4HOASZ2SUBCCTV210 | Prepare and Submit As-Built Drawings for Security Network for CCTV-Z2-SUB | 2028-10-02 → 2028-09-28 (-4d) | 2028-10-10 → 2028-10-07 (-3d) | -182d → -179d |
| RHD4HOASZ2SUBRD220 | Prepare and Submit As-Built Drawings for Road Works( KERBING AND PAVEMENT ) for RD-Z2-SUB | 2028-11-04 → 2028-10-31 (-4d) | 2028-11-09 → 2028-11-06 (-3d) | -198d → -195d |
| RHD4HOASZ2SUBICT200 | Prepare and Submit As-Built Drawings for Information and Communication Technologies Network for ICT-Z2-SUB | 2028-11-15 → 2028-11-12 (-3d) | 2028-11-30 → 2028-11-27 (-3d) | -197d → -194d |
| 9231 | **RHD4-02-002-As Built Drawing Submittals-Z3** | 2027-12-28 → 2027-12-23 (-5d) | 2028-11-14 → 2028-11-11 (-3d) |  |
| RHD4HOASZ3SUBLV160 | Prepare and Submit As-Built Drawings for Low Voltage Network for LV-Z3-SUB | 2027-12-28 → 2027-12-23 (-5d) | 2028-01-05 → 2028-01-01 (-4d) | -183d → -179d |
| RHD4HOASZ3SUBST110 | Prepare and Submit As-Built Drawings for Storm Water Network for ST-Z3-SUB | 2028-06-12 → 2028-06-04 (-8d) | 2028-06-25 → 2028-06-17 (-8d) | -146d → -139d |
| RHD4HOASZ3SUBEW100 | Prepare and Submit As-Built Drawings for Road Plans and Profile for EW-Z3-SUB | 2028-08-03 → 2028-07-26 (-8d) | 2028-08-21 → 2028-08-13 (-8d) | -147d → -140d |
| RHD4HOASZ3SUBIRR140 | Prepare and Submit As-Built Drawings for Irrigation Network for IRR-Z3-SUB | 2028-08-14 → 2028-08-06 (-8d) | 2028-08-22 → 2028-08-14 (-8d) | -146d → -139d |
| RHD4HOASZ3SUBMV150 | Prepare and Submit As-Built Drawings for Medium Voltage Network for MV-Z3-SUB | 2028-08-14 → 2028-08-06 (-8d) | 2028-08-22 → 2028-08-14 (-8d) | -146d → -139d |
| RHD4HOASZ3SUBSL170 | Prepare and Submit As-Built Drawings for Street Lighting Network for SL-Z3-SUB | 2028-08-09 → 2028-08-06 (-3d) | 2028-08-26 → 2028-08-22 (-4d) | -165d → -162d |
| RHD4HOASZ3SUBTC190 | Prepare and Submit As-Built Drawings for Telecommunications Network for TC-Z3-SUB | 2028-08-12 → 2028-08-06 (-6d) | 2028-08-17 → 2028-08-12 (-5d) | -180d → -175d |
| RHD4HOASZ3SUBPT130 | Prepare and Submit As-Built Drawings for Potable Water Network for PT-Z3-SUB | 2028-08-19 → 2028-08-10 (-9d) | 2028-08-27 → 2028-08-19 (-8d) | -146d → -139d |
| RHD4HOASZ3SUBSW120 | Prepare and Submit As-Built Drawings for Sewage Network for SW-Z3-SUB | 2028-09-04 → 2028-08-27 (-8d) | 2028-09-10 → 2028-09-02 (-8d) | -146d → -139d |
| RHD4HOASZ3SUBCCTV210 | Prepare and Submit As-Built Drawings for Security Network for CCTV-Z3-SUB | 2028-09-21 → 2028-09-18 (-3d) | 2028-10-01 → 2028-09-27 (-4d) | -182d → -179d |
| RHD4HOASZ3SUBICT200 | Prepare and Submit As-Built Drawings for Information and Communication Technologies Network for ICT-Z3-SUB | 2028-10-28 → 2028-10-24 (-4d) | 2028-11-14 → 2028-11-11 (-3d) | -197d → -194d |
| RHD4HOASZ3SUBRD220 | Prepare and Submit As-Built Drawings for Road Works( KERBING AND PAVEMENT ) for RD-Z3-SUB | 2028-10-28 → 2028-10-24 (-4d) | 2028-11-02 → 2028-10-30 (-3d) | -198d → -195d |
| 9232 | **RHD4-02-002-As Built Drawing Submittals-Z4** | 2027-11-22 → 2027-11-20 (-2d) | 2028-09-03 → 2028-08-26 (-8d) |  |
| RHD4HOASZ4SUBLV160 | Prepare and Submit As-Built Drawings for Low Voltage Network for LV-Z4-SUB | 2027-11-22 → 2027-11-20 (-2d) | 2027-12-01 → 2027-11-28 (-3d) | -160.02d → -158d |
| RHD4HOASZ4SUBSL170 | Prepare and Submit As-Built Drawings for Street Lighting Network for SL-Z4-SUB | 2027-12-28 → 2027-12-26 (-2d) | 2028-01-15 → 2028-01-11 (-4d) | -183.02d → -181d |
| RHD4HOASZ4SUBTC190 | Prepare and Submit As-Built Drawings for Telecommunications Network for TC-Z4-SUB | 2028-05-29 → 2028-05-21 (-8d) | 2028-06-15 → 2028-06-07 (-8d) | -148d → -141d |
| RHD4HOASZ4SUBEW100 | Prepare and Submit As-Built Drawings for Road Plans and Profile for EW-Z4-SUB | 2028-07-27 → 2028-07-19 (-8d) | 2028-08-02 → 2028-07-25 (-8d) | -147d → -140d |

| ID | Task | Start | Finish | Total float |
| --- | --- | --- | --- | --- |
| RHD4HOASZ4SUBCCTV210 | Prepare and Submit As-Built Drawings for Security Network for CCTV-Z4-SUB | 2028-08-02 → 2028-07-25 (-8d) | 2028-08-10 → 2028-08-02 (-8d) | -147d → -140d |
| RHD4HOASZ4SUBIRR140 | Prepare and Submit As-Built Drawings for Irrigation Network for IRR-Z4-SUB | 2028-08-05 → 2028-07-27 (-9d) | 2028-08-13 → 2028-08-05 (-8d) | -146d → -139d |
| RHD4HOASZ4SUBMV150 | Prepare and Submit As-Built Drawings for Medium Voltage Network for MV-Z4-SUB | 2028-08-05 → 2028-07-27 (-9d) | 2028-08-13 → 2028-08-05 (-8d) | -146d → -139d |
| RHD4HOASZ4SUBST110 | Prepare and Submit As-Built Drawings for Storm Water Network for ST-Z4-SUB | 2028-08-07 → 2028-07-30 (-8d) | 2028-08-20 → 2028-08-12 (-8d) | -146d → -139d |
| RHD4HOASZ4SUBICT200 | Prepare and Submit As-Built Drawings for Information and Communication Technologies Network for ICT-Z4-SUB | 2028-08-09 → 2028-08-01 (-8d) | 2028-08-27 → 2028-08-19 (-8d) | -146d → -139d |
| RHD4HOASZ4SUBPT130 | Prepare and Submit As-Built Drawings for Potable Water Network for PT-Z4-SUB | 2028-08-09 → 2028-08-01 (-8d) | 2028-08-17 → 2028-08-09 (-8d) | -146d → -139d |
| RHD4HOASZ4SUBRD220 | Prepare and Submit As-Built Drawings for Road Works( KERBING AND PAVEMENT ) for RD-Z4-SUB | 2028-08-19 → 2028-08-10 (-9d) | 2028-08-27 → 2028-08-19 (-8d) | -147d → -140d |
| RHD4HOASZ4SUBSW120 | Prepare and Submit As-Built Drawings for Sewage Network for SW-Z4-SUB | 2028-08-21 → 2028-08-13 (-8d) | 2028-09-03 → 2028-08-26 (-8d) | -146d → -139d |
| 9233 | **RHD4-02-002-As Built Drawing Submittals-Z5** | 2027-10-20 → 2027-10-19 (-1d) | 2028-08-09 → 2028-08-01 (-8d) |  |
| RHD4HOASZ5SUBLV160 | Prepare and Submit As-Built Drawings for Low Voltage Network for LV-Z5-SUB | 2027-10-20 → 2027-10-19 (-1d) | 2027-10-30 → 2027-10-27 (-3d) | -148.02d → -147d |
| RHD4HOASZ5SUBSL170 | Prepare and Submit As-Built Drawings for Street Lighting Network for SL-Z5-SUB | 2028-01-23 → 2028-01-22 (-1d) | 2028-02-09 → 2028-02-07 (-2d) | -124.02d → -123d |
| RHD4HOASZ5SUBTC190 | Prepare and Submit As-Built Drawings for Telecommunications Network for TC-Z5-SUB | 2028-04-20 → 2028-04-12 (-8d) | 2028-05-10 → 2028-04-29 (-11d) | -148d → -141d |
| RHD4HOASZ5SUBSW120 | Prepare and Submit As-Built Drawings for Sewage Network for SW-Z5-SUB | 2028-06-26 → 2028-06-18 (-8d) | 2028-07-09 → 2028-07-01 (-8d) | -166d → -159d |
| RHD4HOASZ5SUBICT200 | Prepare and Submit As-Built Drawings for Information and Communication Technologies Network for ICT-Z5-SUB | 2028-07-03 → 2028-06-25 (-8d) | 2028-07-20 → 2028-07-12 (-8d) | -146d → -139d |
| RHD4HOASZ5SUBEW100 | Prepare and Submit As-Built Drawings for Road Plans and Profile for EW-Z5-SUB | 2028-07-09 → 2028-07-01 (-8d) | 2028-07-17 → 2028-07-09 (-8d) | -147d → -140d |
| RHD4HOASZ5SUBST110 | Prepare and Submit As-Built Drawings for Storm Water Network for ST-Z5-SUB | 2028-07-10 → 2028-07-02 (-8d) | 2028-07-23 → 2028-07-15 (-8d) | -146d → -139d |
| RHD4HOASZ5SUBCCTV210 | Prepare and Submit As-Built Drawings for Security Network for CCTV-Z5-SUB | 2028-07-15 → 2028-07-06 (-9d) | 2028-07-23 → 2028-07-15 (-8d) | -147d → -140d |
| RHD4HOASZ5SUBIRR140 | Prepare and Submit As-Built Drawings for Irrigation Network for IRR-Z5-SUB | 2028-07-17 → 2028-07-09 (-8d) | 2028-07-25 → 2028-07-17 (-8d) | -146d → -139d |
| RHD4HOASZ5SUBMV150 | Prepare and Submit As-Built Drawings for Medium Voltage Network for MV-Z5-SUB | 2028-07-17 → 2028-07-09 (-8d) | 2028-07-25 → 2028-07-17 (-8d) | -146d → -139d |
| RHD4HOASZ5SUBPT130 | Prepare and Submit As-Built Drawings for Potable Water Network for PT-Z5-SUB | 2028-07-17 → 2028-07-09 (-8d) | 2028-07-25 → 2028-07-17 (-8d) | -146d → -139d |
| RHD4HOASZ5SUBRD220 | Prepare and Submit As-Built Drawings for Road Works( KERBING AND PAVEMENT ) for RD-Z5-SUB | 2028-08-03 → 2028-07-26 (-8d) | 2028-08-09 → 2028-08-01 (-8d) | -147d → -140d |
| 9234 | **RHD4-02-002-As Built Drawing Submittals-Z6** | 2027-11-13 → 2027-11-10 (-3d) | 2028-08-17 → 2028-08-09 (-8d) |  |
| RHD4HOASZ6SUBLV160 | Prepare and Submit As-Built Drawings for Low Voltage Network for LV-Z6-SUB | 2027-11-13 → 2027-11-10 (-3d) | 2027-11-22 → 2027-11-18 (-4d) | -160.02d → -158d |
| RHD4HOASZ6SUBSL170 | Prepare and Submit As-Built Drawings for Street Lighting Network for SL-Z6-SUB | 2027-12-11 → 2027-12-08 (-3d) | 2027-12-28 → 2027-12-25 (-3d) | -183.02d → -181d |
| RHD4HOASZ6SUBTC190 | Prepare and Submit As-Built Drawings for Telecommunications Network for TC-Z6-SUB | 2028-05-11 → 2028-04-30 (-11d) | 2028-05-28 → 2028-05-20 (-8d) | -148d → -141d |
| RHD4HOASZ6SUBSW120 | Prepare and Submit As-Built Drawings for Sewage Network for SW-Z6-SUB | 2028-07-10 → 2028-07-02 (-8d) | 2028-07-25 → 2028-07-17 (-8d) | -166d → -159d |
| RHD4HOASZ6SUBEW100 | Prepare and Submit As-Built Drawings for Road Plans and Profile for EW-Z6-SUB | 2028-07-18 → 2028-07-10 (-8d) | 2028-07-26 → 2028-07-18 (-8d) | -147d → -140d |
| RHD4HOASZ6SUBICT200 | Prepare and Submit As-Built Drawings for Information and Communication Technologies Network for ICT-Z6-SUB | 2028-07-22 → 2028-07-13 (-9d) | 2028-08-08 → 2028-07-31 (-8d) | -146d → -139d |
| RHD4HOASZ6SUBCCTV210 | Prepare and Submit As-Built Drawings for Security Network for CCTV-Z6-SUB | 2028-07-24 → 2028-07-16 (-8d) | 2028-08-01 → 2028-07-24 (-8d) | -147d → -140d |
| RHD4HOASZ6SUBST110 | Prepare and Submit As-Built Drawings for Storm Water Network for ST-Z6-SUB | 2028-07-24 → 2028-07-16 (-8d) | 2028-08-06 → 2028-07-29 (-8d) | -146d → -139d |
| RHD4HOASZ6SUBIRR140 | Prepare and Submit As-Built Drawings for Irrigation Network for IRR-Z6-SUB | 2028-07-26 → 2028-07-18 (-8d) | 2028-08-03 → 2028-07-26 (-8d) | -146d → -139d |
| RHD4HOASZ6SUBMV150 | Prepare and Submit As-Built Drawings for Medium Voltage Network for MV-Z6-SUB | 2028-07-26 → 2028-07-18 (-8d) | 2028-08-03 → 2028-07-26 (-8d) | -146d → -139d |
| RHD4HOASZ6SUBPT130 | Prepare and Submit As-Built Drawings for Potable Water Network for PT-Z6-SUB | 2028-07-26 → 2028-07-18 (-8d) | 2028-08-08 → 2028-07-31 (-8d) | -146d → -139d |
| RHD4HOASZ6SUBRD220 | Prepare and Submit As-Built Drawings for Road Works( KERBING AND PAVEMENT ) for RD-Z6-SUB | 2028-08-10 → 2028-08-02 (-8d) | 2028-08-17 → 2028-08-09 (-8d) | -147d → -140d |
| 9235 | **RHD4-02-002-As Built Drawing Submittals-Z7** | 2028-01-25 → 2028-01-20 (-5d) | 2028-12-19 → 2028-12-16 (-3d) |  |
| RHD4HOASZ7SUBLV160 | Prepare and Submit As-Built Drawings for Low Voltage Network for LV-Z7-SUB | 2028-01-25 → 2028-01-20 (-5d) | 2028-02-02 → 2028-01-29 (-4d) | -126d → -122d |
| RHD4HOASZ7SUBST110 | Prepare and Submit As-Built Drawings for Storm Water Network for ST-Z7-SUB | 2028-07-26 → 2028-07-18 (-8d) | 2028-08-08 → 2028-07-31 (-8d) | -133d → -126d |
| RHD4HOASZ7SUBMV150 | Prepare and Submit As-Built Drawings for Medium Voltage Network for MV-Z7-SUB | 2028-09-11 → 2028-09-03 (-8d) | 2028-09-21 → 2028-09-13 (-8d) | -146d → -139d |
| RHD4HOASZ7SUBEW100 | Prepare and Submit As-Built Drawings for Road Plans and Profile for EW-Z7-SUB | 2028-09-13 → 2028-09-05 (-8d) | 2028-09-21 → 2028-09-13 (-8d) | -147d → -140d |
| RHD4HOASZ7SUBIRR140 | Prepare and Submit As-Built Drawings for Irrigation Network for IRR-Z7-SUB | 2028-09-13 → 2028-09-05 (-8d) | 2028-10-02 → 2028-09-24 (-8d) | -146d → -139d |
| RHD4HOASZ7SUBTC190 | Prepare and Submit As-Built Drawings for Telecommunications Network for TC-Z7-SUB | 2028-09-12 → 2028-09-06 (-6d) | 2028-09-30 → 2028-09-24 (-6d) | -180d → -175d |
| RHD4HOASZ7SUBPT130 | Prepare and Submit As-Built Drawings for Potable Water Network for PT-Z7-SUB | 2028-09-16 → 2028-09-07 (-9d) | 2028-10-02 → 2028-09-24 (-8d) | -146d → -139d |
| RHD4HOASZ7SUBSW120 | Prepare and Submit As-Built Drawings for Sewage Network for SW-Z7-SUB | 2028-09-28 → 2028-09-19 (-9d) | 2028-10-11 → 2028-10-03 (-8d) | -146d → -139d |
| RHD4HOASZ7SUBSL170 | Prepare and Submit As-Built Drawings for Street Lighting Network for SL-Z7-SUB | 2028-10-11 → 2028-10-03 (-8d) | 2028-10-28 → 2028-10-19 (-9d) | -173d → -166d |
| RHD4HOASZ7SUBCCTV210 | Prepare and Submit As-Built Drawings for Security Network for CCTV-Z7-SUB | 2028-10-21 → 2028-10-17 (-4d) | 2028-11-04 → 2028-10-31 (-4d) | -182d → -179d |
| RHD4HOASZ7SUBRD220 | Prepare and Submit As-Built Drawings for Road Works( KERBING AND PAVEMENT ) for RD-Z7-SUB | 2028-11-18 → 2028-11-14 (-4d) | 2028-11-23 → 2028-11-20 (-3d) | -198d → -195d |
| RHD4HOASZ7SUBICT200 | Prepare and Submit As-Built Drawings for Information and Communication Technologies Network for ICT-Z7-SUB | 2028-12-11 → 2028-12-07 (-4d) | 2028-12-19 → 2028-12-16 (-3d) | -197d → -194d |
| 9236 | **RHD4-02-002-As Built Drawing Submittals-Z8** | 2028-02-03 → 2028-01-30 (-4d) | 2028-12-28 → 2028-12-25 (-3d) |  |
| RHD4HOASZ8SUBLV160 | Prepare and Submit As-Built Drawings for Low Voltage Network for LV-Z8-SUB | 2028-02-03 → 2028-01-30 (-4d) | 2028-02-12 → 2028-02-07 (-5d) | -126d → -122d |
| RHD4HOASZ8SUBST110 | Prepare and Submit As-Built Drawings for Storm Water Network for ST-Z8-SUB | 2028-08-09 → 2028-08-01 (-8d) | 2028-08-22 → 2028-08-14 (-8d) | -133d → -126d |
| RHD4HOASZ8SUBMV150 | Prepare and Submit As-Built Drawings for Medium Voltage Network for MV-Z8-SUB | 2028-09-24 → 2028-09-14 (-10d) | 2028-10-02 → 2028-09-24 (-8d) | -138d → -131d |
| RHD4HOASZ8SUBIRR140 | Prepare and Submit As-Built Drawings for Irrigation Network for IRR-Z8-SUB | 2028-10-03 → 2028-09-25 (-8d) | 2028-10-21 → 2028-10-12 (-9d) | -146d → -139d |
| RHD4HOASZ8SUBPT130 | Prepare and Submit As-Built Drawings for Potable Water Network for PT-Z8-SUB | 2028-10-03 → 2028-09-25 (-8d) | 2028-10-21 → 2028-10-12 (-9d) | -146d → -139d |
| RHD4HOASZ8SUBTC190 | Prepare and Submit As-Built Drawings for Telecommunications Network for TC-Z8-SUB | 2028-10-01 → 2028-09-25 (-6d) | 2028-10-17 → 2028-10-11 (-6d) | -180d → -175d |
| RHD4HOASZ8SUBSW120 | Prepare and Submit As-Built Drawings for Sewage Network for SW-Z8-SUB | 2028-10-12 → 2028-10-04 (-8d) | 2028-10-25 → 2028-10-17 (-8d) | -146d → -139d |
| RHD4HOASZ8SUBSL170 | Prepare and Submit As-Built Drawings for Street Lighting Network for SL-Z8-SUB | 2028-10-29 → 2028-10-21 (-8d) | 2028-11-14 → 2028-11-06 (-8d) | -173d → -166d |
| RHD4HOASZ8SUBCCTV210 | Prepare and Submit As-Built Drawings for Security Network for CCTV-Z8-SUB | 2028-11-05 → 2028-11-01 (-4d) | 2028-11-22 → 2028-11-19 (-3d) | -182d → -179d |
| RHD4HOASZ8SUBEW100 | Prepare and Submit As-Built Drawings for Road Plans and Profile for EW-Z8-SUB | 2028-11-25 → 2028-11-21 (-4d) | 2028-12-03 → 2028-11-29 (-4d) | -198d → -195d |
| RHD4HOASZ8SUBRD220 | Prepare and Submit As-Built Drawings for Road Works( KERBING AND PAVEMENT ) for RD-Z8-SUB | 2028-11-25 → 2028-11-21 (-4d) | 2028-11-30 → 2028-11-27 (-3d) | -198d → -195d |
| RHD4HOASZ8SUBICT200 | Prepare and Submit As-Built Drawings for Information and Communication Technologies Network for ICT-Z8-SUB | 2028-12-20 → 2028-12-17 (-3d) | 2028-12-28 → 2028-12-25 (-3d) | -197d → -194d |
| 9237 | **RHD4-02-002-As Built Drawing Submittals-Z9** | 2028-02-13 → 2028-02-08 (-5d) | 2029-01-07 → 2029-01-03 (-4d) |  |
| RHD4HOASZ9SUBLV160 | Prepare and Submit As-Built Drawings for Low Voltage Network for LV-Z9-SUB | 2028-02-13 → 2028-02-08 (-5d) | 2028-02-21 → 2028-02-16 (-5d) | -126d → -122d |
| RHD4HOASZ9SUBST110 | Prepare and Submit As-Built Drawings for Storm Water Network for ST-Z9-SUB | 2028-08-23 → 2028-08-15 (-8d) | 2028-09-05 → 2028-08-28 (-8d) | -133d → -126d |
| RHD4HOASZ9SUBRD220 | Prepare and Submit As-Built Drawings for Road Works( KERBING AND PAVEMENT ) for RD-Z9-SUB | 2028-08-29 → 2028-08-21 (-8d) | 2028-09-04 → 2028-08-27 (-8d) | -173d → -166d |
| RHD4HOASZ9SUBMV150 | Prepare and Submit As-Built Drawings for Medium Voltage Network for MV-Z9-SUB | 2028-10-03 → 2028-09-25 (-8d) | 2028-10-11 → 2028-10-03 (-8d) | -130d → -123d |
| RHD4HOASZ9SUBTC190 | Prepare and Submit As-Built Drawings for Telecommunications Network for TC-Z9-SUB | 2028-10-18 → 2028-10-12 (-6d) | 2028-10-29 → 2028-10-23 (-6d) | -180d → -175d |
| RHD4HOASZ9SUBIRR140 | Prepare and Submit As-Built Drawings for Irrigation Network for IRR-Z9-SUB | 2028-10-22 → 2028-10-14 (-8d) | 2028-11-08 → 2028-10-31 (-8d) | -146d → -139d |
| RHD4HOASZ9SUBPT130 | Prepare and Submit As-Built Drawings for Potable Water Network for PT-Z9-SUB | 2028-10-22 → 2028-10-14 (-8d) | 2028-11-08 → 2028-10-31 (-8d) | -146d → -139d |
| RHD4HOASZ9SUBSW120 | Prepare and Submit As-Built Drawings for Sewage Network for SW-Z9-SUB | 2028-10-26 → 2028-10-18 (-8d) | 2028-11-08 → 2028-10-31 (-8d) | -146d → -139d |
| RHD4HOASZ9SUBSL170 | Prepare and Submit As-Built Drawings for Street Lighting Network for SL-Z9-SUB | 2028-11-15 → 2028-11-07 (-8d) | 2028-12-02 → 2028-11-23 (-9d) | -173d → -166d |

| ID | Task | Start | Finish | Total float |
| --- | --- | --- | --- | --- |
| RHD4HOASZ9SUBCCTV210 | Prepare and Submit As-Built Drawings for Security Network for CCTV-Z9-SUB | 2028-11-23 → 2028-11-20 (-3d) | 2028-12-11 → 2028-12-07 (-4d) | -182d → -179d |
| RHD4HOASZ9SUBEW100 | Prepare and Submit As-Built Drawings for Road Plans and Profile for EW-Z9-SUB | 2028-12-04 → 2028-11-30 (-4d) | 2028-12-12 → 2028-12-09 (-3d) | -198d → -195d |
| RHD4HOASZ9SUBICT200 | Prepare and Submit As-Built Drawings for Information and Communication Technologies Network for ICT-Z9-SUB | 2028-12-30 → 2028-12-26 (-4d) | 2029-01-07 → 2029-01-03 (-4d) | -197d → -194d |
| 9238 | **RHD4-02-002-As Built Drawing Submittals-Tunne 1 - TUN1** | 2028-04-24 → 2028-04-20 (-4d) | 2028-05-10 → 2028-05-03 (-7d) |  |
| RHD4HOASTUN1SUB1000 | Prepare and Submit As-Built Drawings for TUNNEL 1 (PLANS) -Z5 for -TUN1-SUB | 2028-04-24 → 2028-04-20 (-4d) | 2028-05-10 → 2028-05-03 (-7d) | -179d → -176d |
| RHD4HOASTUN1SUB1100 | Prepare and Submit As-Built Drawings for TUNNEL 1 (SECTIONS) -Z5 for -TUN1-SUB | 2028-04-24 → 2028-04-20 (-4d) | 2028-05-10 → 2028-05-03 (-7d) | -167d → -164d |
| RHD4HOASTUN1SUB1200 | Prepare and Submit As-Built Drawings for TUNNEL 1 (BBS) -Z5 for -TUN1-SUB | 2028-04-24 → 2028-04-20 (-4d) | 2028-05-10 → 2028-05-03 (-7d) | -155d → -152d |
| 9240 | **RHD4-02-002-As Built Drawing Submittals-Sewage Lift Station 1 - SWL1** | 2028-04-10 → 2028-04-06 (-4d) | 2028-06-07 → 2028-06-04 (-3d) |  |
| RHD4HOASSWL1SUB1000 | Prepare and Submit As-Built Drawings for Sewage Lift Station 1 - Z3 - Structure Package for -SWL1-SUB | 2028-04-10 → 2028-04-06 (-4d) | 2028-04-23 → 2028-04-19 (-4d) | -179d → -176d |
| RHD4HOASSWL1SUB1100 | Prepare and Submit As-Built Drawings for Sewage Lift Station 1 - Z3 - Architecture Package for -SWL1-SUB | 2028-04-24 → 2028-04-20 (-4d) | 2028-05-10 → 2028-05-03 (-7d) | -170d → -167d |
| RHD4HOASSWL1SUB1200 | Prepare and Submit As-Built Drawings for Sewage Lift Station 1 - Z3 - Mechanical Package for -SWL1-SUB | 2028-05-11 → 2028-05-08 (-3d) | 2028-05-24 → 2028-05-21 (-3d) | -170d → -167d |
| RHD4HOASSWL1SUB1300 | Prepare and Submit As-Built Drawings for Sewage Lift Station 1 - Z3 - Electrical Package for -SWL1-SUB | 2028-05-25 → 2028-05-22 (-3d) | 2028-06-07 → 2028-06-04 (-3d) | -170d → -167d |
| 9242 | **RHD4-02-002-As Built Drawing Submittals-Storm Lift Station 1 - STL1** | 2028-08-12 → 2028-08-06 (-6d) | 2028-09-28 → 2028-09-25 (-3d) |  |
| RHD4HOASSTL1SUB1000 | Prepare and Submit As-Built Drawings for Storm Lift Station 1 - Z5 - Structure Package for -STL1-SUB | 2028-08-12 → 2028-08-06 (-6d) | 2028-08-17 → 2028-08-12 (-5d) | -179d → -174d |
| RHD4HOASSTL1SUB1200 | Prepare and Submit As-Built Drawings for Storm Lift Station 1 - Z5 - Mechanical Package for -STL1-SUB | 2028-08-12 → 2028-08-06 (-6d) | 2028-08-29 → 2028-08-23 (-6d) | -168d → -163d |
| RHD4HOASSTL1SUB1300 | Prepare and Submit As-Built Drawings for Storm Lift Station 1 - Z5 - Electrical Package for -STL1-SUB | 2028-08-12 → 2028-08-06 (-6d) | 2028-08-27 → 2028-08-21 (-6d) | -166d → -161d |
| RHD4HOASSTL1SUB1100 | Prepare and Submit As-Built Drawings for Storm Lift Station 1 - Z5 - Architecture Package for -STL1-SUB | 2028-09-21 → 2028-09-18 (-3d) | 2028-09-28 → 2028-09-25 (-3d) | -167d → -164d |
| 9244 | **RHD4-02-002-As Built Drawing Approvals** | 2027-10-30 → 2027-10-28 (-2d) | 2029-01-16 → 2029-01-13 (-3d) |  |
| 9245 | **RHD4-02-002-As Built Drawing Approvals-Z1** | 2028-01-25 → 2028-01-20 (-5d) | 2028-12-19 → 2028-12-16 (-3d) |  |
| RHD4HOASZ1APPLV160 | Review and Approval of As-Built Drawings for Low Voltage Network for LV-Z1-APP | 2028-01-25 → 2028-01-20 (-5d) | 2028-02-02 → 2028-01-29 (-4d) | -183d → -179d |
| RHD4HOASZ1APPMV150 | Review and Approval of As-Built Drawings for Medium Voltage Network for MV-Z1-APP | 2028-09-11 → 2028-09-03 (-8d) | 2028-09-21 → 2028-09-13 (-8d) | -146d → -139d |
| RHD4HOASZ1APPEW100 | Review and Approval of As-Built Drawings for Road Plans and Profile for EW-Z1-APP | 2028-09-13 → 2028-09-05 (-8d) | 2028-09-21 → 2028-09-13 (-8d) | -147d → -140d |
| RHD4HOASZ1APPTC190 | Review and Approval of As-Built Drawings for Telecommunications Network for TC-Z1-APP | 2028-09-12 → 2028-09-06 (-6d) | 2028-09-30 → 2028-09-24 (-6d) | -149d → -144d |
| RHD4HOASZ1APPST110 | Review and Approval of As-Built Drawings for Storm Water Network for ST-Z1-APP | 2028-10-03 → 2028-09-25 (-8d) | 2028-10-16 → 2028-10-08 (-8d) | -146d → -139d |
| RHD4HOASZ1APPIRR140 | Review and Approval of As-Built Drawings for Irrigation Network for IRR-Z1-APP | 2028-10-05 → 2028-09-27 (-8d) | 2028-10-18 → 2028-10-10 (-8d) | -146d → -139d |
| RHD4HOASZ1APPPT130 | Review and Approval of As-Built Drawings for Potable Water Network for PT-Z1-APP | 2028-10-05 → 2028-09-27 (-8d) | 2028-10-18 → 2028-10-10 (-8d) | -146d → -139d |
| RHD4HOASZ1APPSL170 | Review and Approval of As-Built Drawings for Street Lighting Network for SL-Z1-APP | 2028-10-11 → 2028-10-03 (-8d) | 2028-10-28 → 2028-10-19 (-9d) | -173d → -166d |
| RHD4HOASZ1APPSW120 | Review and Approval of As-Built Drawings for Sewage Network for SW-Z1-APP | 2028-10-15 → 2028-10-07 (-8d) | 2028-10-21 → 2028-10-12 (-9d) | -146d → -139d |
| RHD4HOASZ1APPCCTV210 | Review and Approval of As-Built Drawings for Security Network for CCTV-Z1-APP | 2028-10-21 → 2028-10-17 (-4d) | 2028-11-04 → 2028-10-31 (-4d) | -182d → -179d |
| RHD4HOASZ1APPRD220 | Review and Approval of As-Built Drawings for Road Works( KERBING AND PAVEMENT ) for RD-Z1-APP | 2028-11-22 → 2028-11-19 (-3d) | 2028-11-28 → 2028-11-25 (-3d) | -196d → -193d |
| RHD4HOASZ1APPICT200 | Review and Approval of As-Built Drawings for Information and Communication Technologies Network for ICT-Z1-APP | 2028-12-11 → 2028-12-07 (-4d) | 2028-12-19 → 2028-12-16 (-3d) | -197d → -194d |
| 9246 | **RHD4-02-002-As Built Drawing Approvals-Z2** | 2028-01-16 → 2028-01-11 (-5d) | 2028-12-10 → 2028-12-06 (-4d) |  |
| RHD4HOASZ2APPLV160 | Review and Approval of As-Built Drawings for Low Voltage Network for LV-Z2-APP | 2028-01-16 → 2028-01-11 (-5d) | 2028-01-24 → 2028-01-19 (-5d) | -183d → -179d |
| RHD4HOASZ2APPTC190 | Review and Approval of As-Built Drawings for Telecommunications Network for TC-Z2-APP | 2028-08-26 → 2028-08-20 (-6d) | 2028-08-31 → 2028-08-26 (-5d) | -140d → -135d |
| RHD4HOASZ2APPMV150 | Review and Approval of As-Built Drawings for Medium Voltage Network for MV-Z2-APP | 2028-09-02 → 2028-08-24 (-9d) | 2028-09-10 → 2028-09-02 (-8d) | -146d → -139d |
| RHD4HOASZ2APPEW100 | Review and Approval of As-Built Drawings for Road Plans and Profile for EW-Z2-APP | 2028-09-03 → 2028-08-26 (-8d) | 2028-09-12 → 2028-09-04 (-8d) | -147d → -140d |
| RHD4HOASZ2APPST110 | Review and Approval of As-Built Drawings for Storm Water Network for ST-Z2-APP | 2028-09-18 → 2028-09-10 (-8d) | 2028-10-02 → 2028-09-24 (-8d) | -146d → -139d |
| RHD4HOASZ2APPIRR140 | Review and Approval of As-Built Drawings for Irrigation Network for IRR-Z2-APP | 2028-09-20 → 2028-09-12 (-8d) | 2028-10-04 → 2028-09-26 (-8d) | -146d → -139d |
| RHD4HOASZ2APPPT130 | Review and Approval of As-Built Drawings for Potable Water Network for PT-Z2-APP | 2028-09-20 → 2028-09-12 (-8d) | 2028-10-04 → 2028-09-26 (-8d) | -146d → -139d |
| RHD4HOASZ2APPSL170 | Review and Approval of As-Built Drawings for Street Lighting Network for SL-Z2-APP | 2028-09-24 → 2028-09-14 (-10d) | 2028-10-10 → 2028-10-02 (-8d) | -173d → -166d |
| RHD4HOASZ2APPSW120 | Review and Approval of As-Built Drawings for Sewage Network for SW-Z2-APP | 2028-09-26 → 2028-09-17 (-9d) | 2028-10-14 → 2028-10-05 (-9d) | -146d → -139d |
| RHD4HOASZ2APPCCTV210 | Review and Approval of As-Built Drawings for Security Network for CCTV-Z2-APP | 2028-10-11 → 2028-10-08 (-3d) | 2028-10-19 → 2028-10-16 (-3d) | -182d → -179d |
| RHD4HOASZ2APPRD220 | Review and Approval of As-Built Drawings for Road Works( KERBING AND PAVEMENT ) for RD-Z2-APP | 2028-11-13 → 2028-11-09 (-4d) | 2028-11-21 → 2028-11-18 (-3d) | -196d → -193d |
| RHD4HOASZ2APPICT200 | Review and Approval of As-Built Drawings for Information and Communication Technologies Network for ICT-Z2-APP | 2028-12-02 → 2028-11-28 (-4d) | 2028-12-10 → 2028-12-06 (-4d) | -197d → -194d |
| 9247 | **RHD4-02-002-As Built Drawing Approvals-Z3** | 2028-01-06 → 2028-01-02 (-4d) | 2028-11-30 → 2028-11-27 (-3d) |  |
| RHD4HOASZ3APPLV160 | Review and Approval of As-Built Drawings for Low Voltage Network for LV-Z3-APP | 2028-01-06 → 2028-01-02 (-4d) | 2028-01-15 → 2028-01-10 (-5d) | -183d → -179d |
| RHD4HOASZ3APPTC190 | Review and Approval of As-Built Drawings for Telecommunications Network for TC-Z3-APP | 2028-08-19 → 2028-08-13 (-6d) | 2028-08-24 → 2028-08-19 (-5d) | -140d → -135d |
| RHD4HOASZ3APPEW100 | Review and Approval of As-Built Drawings for Road Plans and Profile for EW-Z3-APP | 2028-08-22 → 2028-08-14 (-8d) | 2028-09-02 → 2028-08-24 (-9d) | -147d → -140d |
| RHD4HOASZ3APPMV150 | Review and Approval of As-Built Drawings for Medium Voltage Network for MV-Z3-APP | 2028-08-23 → 2028-08-15 (-8d) | 2028-08-31 → 2028-08-23 (-8d) | -146d → -139d |
| RHD4HOASZ3APPSL170 | Review and Approval of As-Built Drawings for Street Lighting Network for SL-Z3-APP | 2028-08-27 → 2028-08-23 (-4d) | 2028-09-12 → 2028-09-09 (-3d) | -165d → -162d |
| RHD4HOASZ3APPST110 | Review and Approval of As-Built Drawings for Storm Water Network for ST-Z3-APP | 2028-09-04 → 2028-08-27 (-8d) | 2028-09-17 → 2028-09-09 (-8d) | -146d → -139d |
| RHD4HOASZ3APPIRR140 | Review and Approval of As-Built Drawings for Irrigation Network for IRR-Z3-APP | 2028-09-06 → 2028-08-29 (-8d) | 2028-09-19 → 2028-09-11 (-8d) | -146d → -139d |
| RHD4HOASZ3APPPT130 | Review and Approval of As-Built Drawings for Potable Water Network for PT-Z3-APP | 2028-09-06 → 2028-08-29 (-8d) | 2028-09-19 → 2028-09-11 (-8d) | -146d → -139d |
| RHD4HOASZ3APPSW120 | Review and Approval of As-Built Drawings for Sewage Network for SW-Z3-APP | 2028-09-18 → 2028-09-10 (-8d) | 2028-09-25 → 2028-09-16 (-9d) | -146d → -139d |
| RHD4HOASZ3APPCCTV210 | Review and Approval of As-Built Drawings for Security Network for CCTV-Z3-APP | 2028-10-02 → 2028-09-28 (-4d) | 2028-10-10 → 2028-10-07 (-3d) | -182d → -179d |
| RHD4HOASZ3APPRD220 | Review and Approval of As-Built Drawings for Road Works( KERBING AND PAVEMENT ) for RD-Z3-APP | 2028-11-04 → 2028-10-31 (-4d) | 2028-11-12 → 2028-11-08 (-4d) | -196d → -193d |
| RHD4HOASZ3APPICT200 | Review and Approval of As-Built Drawings for Information and Communication Technologies Network for ICT-Z3-APP | 2028-11-15 → 2028-11-12 (-3d) | 2028-11-30 → 2028-11-27 (-3d) | -197d → -194d |
| 9248 | **RHD4-02-002-As Built Drawing Approvals-Z4** | 2027-12-01 → 2027-11-29 (-2d) | 2028-09-17 → 2028-09-09 (-8d) |  |
| RHD4HOASZ4APPLV160 | Review and Approval of As-Built Drawings for Low Voltage Network for LV-Z4-APP | 2027-12-01 → 2027-11-29 (-2d) | 2027-12-11 → 2027-12-07 (-4d) | -160.02d → -158d |
| RHD4HOASZ4APPSL170 | Review and Approval of As-Built Drawings for Street Lighting Network for SL-Z4-APP | 2028-01-15 → 2028-01-12 (-3d) | 2028-02-01 → 2028-01-29 (-3d) | -183.02d → -181d |
| RHD4HOASZ4APPTC190 | Review and Approval of As-Built Drawings for Telecommunications Network for TC-Z4-APP | 2028-06-17 → 2028-06-08 (-9d) | 2028-07-04 → 2028-06-26 (-8d) | -148d → -141d |
| RHD4HOASZ4APPEW100 | Review and Approval of As-Built Drawings for Road Plans and Profile for EW-Z4-APP | 2028-08-10 → 2028-08-02 (-8d) | 2028-08-21 → 2028-08-13 (-8d) | -147d → -140d |
| RHD4HOASZ4APPCCTV210 | Review and Approval of As-Built Drawings for Security Network for CCTV-Z4-APP | 2028-08-12 → 2028-08-03 (-9d) | 2028-08-20 → 2028-08-12 (-8d) | -147d → -140d |
| RHD4HOASZ4APPMV150 | Review and Approval of As-Built Drawings for Medium Voltage Network for MV-Z4-APP | 2028-08-14 → 2028-08-06 (-8d) | 2028-08-22 → 2028-08-14 (-8d) | -146d → -139d |
| RHD4HOASZ4APPST110 | Review and Approval of As-Built Drawings for Storm Water Network for ST-Z4-APP | 2028-08-21 → 2028-08-13 (-8d) | 2028-09-03 → 2028-08-26 (-8d) | -146d → -139d |
| RHD4HOASZ4APPIRR140 | Review and Approval of As-Built Drawings for Irrigation Network for IRR-Z4-APP | 2028-08-23 → 2028-08-15 (-8d) | 2028-09-05 → 2028-08-28 (-8d) | -146d → -139d |
| RHD4HOASZ4APPPT130 | Review and Approval of As-Built Drawings for Potable Water Network for PT-Z4-APP | 2028-08-23 → 2028-08-15 (-8d) | 2028-09-05 → 2028-08-28 (-8d) | -146d → -139d |
| RHD4HOASZ4APPICT200 | Review and Approval of As-Built Drawings for Information and Communication Technologies Network for ICT-Z4-APP | 2028-08-28 → 2028-08-20 (-8d) | 2028-09-14 → 2028-09-06 (-8d) | -146d → -139d |
| RHD4HOASZ4APPRD220 | Review and Approval of As-Built Drawings for Road Works( KERBING AND PAVEMENT ) for RD-Z4-APP | 2028-08-28 → 2028-08-20 (-8d) | 2028-09-05 → 2028-08-28 (-8d) | -147d → -140d |
| RHD4HOASZ4APPSW120 | Review and Approval of As-Built Drawings for Sewage Network for SW-Z4-APP | 2028-09-04 → 2028-08-27 (-8d) | 2028-09-17 → 2028-09-09 (-8d) | -146d → -139d |

| ID | Task | Start | Finish | Total float |
| --- | --- | --- | --- | --- |
| 9249 | **RHD4-02-002-As Built Drawing Approvals-Z5** | 2027-10-30 → 2027-10-28 (-2d) | 2028-08-17 → 2028-08-09 (-8d) |  |
| RHD4HOASZ5APPLV160 | Review and Approval of As-Built Drawings for Low Voltage Network for LV-Z5-APP | 2027-10-30 → 2027-10-28 (-2d) | 2027-11-08 → 2027-11-06 (-2d) | -148.02d → -147d |
| RHD4HOASZ5APPSL170 | Review and Approval of As-Built Drawings for Street Lighting Network for SL-Z5-APP | 2028-02-09 → 2028-02-08 (-1d) | 2028-03-02 → 2028-02-26 (-5d) | -124.02d → -123d |
| RHD4HOASZ5APPTC190 | Review and Approval of As-Built Drawings for Telecommunications Network for TC-Z5-APP | 2028-05-11 → 2028-04-30 (-11d) | 2028-05-28 → 2028-05-20 (-8d) | -148d → -141d |
| RHD4HOASZ5APPSW120 | Review and Approval of As-Built Drawings for Sewage Network for SW-Z5-APP | 2028-07-10 → 2028-07-02 (-8d) | 2028-07-23 → 2028-07-15 (-8d) | -164d → -157d |
| RHD4HOASZ5APPEW100 | Review and Approval of As-Built Drawings for Road Plans and Profile for EW-Z5-APP | 2028-07-18 → 2028-07-10 (-8d) | 2028-07-29 → 2028-07-20 (-9d) | -147d → -140d |
| RHD4HOASZ5APPICT200 | Review and Approval of As-Built Drawings for Information and Communication Technologies Network for ICT-Z5-APP | 2028-07-22 → 2028-07-13 (-9d) | 2028-08-08 → 2028-07-31 (-8d) | -146d → -139d |
| RHD4HOASZ5APPCCTV210 | Review and Approval of As-Built Drawings for Security Network for CCTV-Z5-APP | 2028-07-24 → 2028-07-16 (-8d) | 2028-08-01 → 2028-07-24 (-8d) | -147d → -140d |
| RHD4HOASZ5APPST110 | Review and Approval of As-Built Drawings for Storm Water Network for ST-Z5-APP | 2028-07-24 → 2028-07-16 (-8d) | 2028-08-06 → 2028-07-29 (-8d) | -146d → -139d |
| RHD4HOASZ5APPIRR140 | Review and Approval of As-Built Drawings for Irrigation Network for IRR-Z5-APP | 2028-07-26 → 2028-07-18 (-8d) | 2028-08-08 → 2028-07-31 (-8d) | -146d → -139d |
| RHD4HOASZ5APPMV150 | Review and Approval of As-Built Drawings for Medium Voltage Network for MV-Z5-APP | 2028-07-26 → 2028-07-18 (-8d) | 2028-08-03 → 2028-07-26 (-8d) | -146d → -139d |
| RHD4HOASZ5APPPT130 | Review and Approval of As-Built Drawings for Potable Water Network for PT-Z5-APP | 2028-07-26 → 2028-07-18 (-8d) | 2028-08-08 → 2028-07-31 (-8d) | -146d → -139d |
| RHD4HOASZ5APPRD220 | Review and Approval of As-Built Drawings for Road Works( KERBING AND PAVEMENT ) for RD-Z5-APP | 2028-08-10 → 2028-08-02 (-8d) | 2028-08-17 → 2028-08-09 (-8d) | -147d → -140d |
| 9250 | **RHD4-02-002-As Built Drawing Approvals-Z6** | 2027-11-22 → 2027-11-20 (-2d) | 2028-08-27 → 2028-08-19 (-8d) |  |
| RHD4HOASZ6APPLV160 | Review and Approval of As-Built Drawings for Low Voltage Network for LV-Z6-APP | 2027-11-22 → 2027-11-20 (-2d) | 2027-12-01 → 2027-11-28 (-3d) | -160.02d → -158d |
| RHD4HOASZ6APPSL170 | Review and Approval of As-Built Drawings for Street Lighting Network for SL-Z6-APP | 2027-12-28 → 2027-12-26 (-2d) | 2028-01-15 → 2028-01-11 (-4d) | -183.02d → -181d |
| RHD4HOASZ6APPTC190 | Review and Approval of As-Built Drawings for Telecommunications Network for TC-Z6-APP | 2028-05-29 → 2028-05-21 (-8d) | 2028-06-15 → 2028-06-07 (-8d) | -148d → -141d |
| RHD4HOASZ6APPSW120 | Review and Approval of As-Built Drawings for Sewage Network for SW-Z6-APP | 2028-07-26 → 2028-07-18 (-8d) | 2028-08-08 → 2028-07-31 (-8d) | -166d → -159d |
| RHD4HOASZ6APPEW100 | Review and Approval of As-Built Drawings for Road Plans and Profile for EW-Z6-APP | 2028-07-30 → 2028-07-22 (-8d) | 2028-08-09 → 2028-08-01 (-8d) | -147d → -140d |
| RHD4HOASZ6APPCCTV210 | Review and Approval of As-Built Drawings for Security Network for CCTV-Z6-APP | 2028-08-02 → 2028-07-25 (-8d) | 2028-08-10 → 2028-08-02 (-8d) | -147d → -140d |
| RHD4HOASZ6APPMV150 | Review and Approval of As-Built Drawings for Medium Voltage Network for MV-Z6-APP | 2028-08-05 → 2028-07-27 (-9d) | 2028-08-13 → 2028-08-05 (-8d) | -146d → -139d |
| RHD4HOASZ6APPST110 | Review and Approval of As-Built Drawings for Storm Water Network for ST-Z6-APP | 2028-08-07 → 2028-07-30 (-8d) | 2028-08-20 → 2028-08-12 (-8d) | -146d → -139d |
| RHD4HOASZ6APPICT200 | Review and Approval of As-Built Drawings for Information and Communication Technologies Network for ICT-Z6-APP | 2028-08-09 → 2028-08-01 (-8d) | 2028-08-27 → 2028-08-19 (-8d) | -146d → -139d |
| RHD4HOASZ6APPIRR140 | Review and Approval of As-Built Drawings for Irrigation Network for IRR-Z6-APP | 2028-08-09 → 2028-08-01 (-8d) | 2028-08-22 → 2028-08-14 (-8d) | -146d → -139d |
| RHD4HOASZ6APPPT130 | Review and Approval of As-Built Drawings for Potable Water Network for PT-Z6-APP | 2028-08-09 → 2028-08-01 (-8d) | 2028-08-22 → 2028-08-14 (-8d) | -146d → -139d |
| RHD4HOASZ6APPRD220 | Review and Approval of As-Built Drawings for Road Works( KERBING AND PAVEMENT ) for RD-Z6-APP | 2028-08-19 → 2028-08-10 (-9d) | 2028-08-27 → 2028-08-19 (-8d) | -147d → -140d |
| 9251 | **RHD4-02-002-As Built Drawing Approvals-Z7** | 2028-02-03 → 2028-01-30 (-4d) | 2028-12-28 → 2028-12-25 (-3d) |  |
| RHD4HOASZ7APPLV160 | Review and Approval of As-Built Drawings for Low Voltage Network for LV-Z7-APP | 2028-02-03 → 2028-01-30 (-4d) | 2028-02-12 → 2028-02-07 (-5d) | -126d → -122d |
| RHD4HOASZ7APPEW100 | Review and Approval of As-Built Drawings for Road Plans and Profile for EW-Z7-APP | 2028-09-24 → 2028-09-14 (-10d) | 2028-10-04 → 2028-09-26 (-8d) | -147d → -140d |
| RHD4HOASZ7APPMV150 | Review and Approval of As-Built Drawings for Medium Voltage Network for MV-Z7-APP | 2028-09-24 → 2028-09-14 (-10d) | 2028-10-11 → 2028-10-03 (-8d) | -146d → -139d |
| RHD4HOASZ7APPTC190 | Review and Approval of As-Built Drawings for Telecommunications Network for TC-Z7-APP | 2028-10-01 → 2028-09-25 (-6d) | 2028-10-17 → 2028-10-11 (-6d) | -149d → -144d |
| RHD4HOASZ7APPST110 | Review and Approval of As-Built Drawings for Storm Water Network for ST-Z7-APP | 2028-10-17 → 2028-10-09 (-8d) | 2028-10-30 → 2028-10-22 (-8d) | -146d → -139d |
| RHD4HOASZ7APPIRR140 | Review and Approval of As-Built Drawings for Irrigation Network for IRR-Z7-APP | 2028-10-19 → 2028-10-11 (-8d) | 2028-10-30 → 2028-10-22 (-8d) | -146d → -139d |
| RHD4HOASZ7APPPT130 | Review and Approval of As-Built Drawings for Potable Water Network for PT-Z7-APP | 2028-10-19 → 2028-10-11 (-8d) | 2028-10-30 → 2028-10-22 (-8d) | -146d → -139d |
| RHD4HOASZ7APPSW120 | Review and Approval of As-Built Drawings for Sewage Network for SW-Z7-APP | 2028-10-22 → 2028-10-14 (-8d) | 2028-10-30 → 2028-10-22 (-8d) | -146d → -139d |
| RHD4HOASZ7APPSL170 | Review and Approval of As-Built Drawings for Street Lighting Network for SL-Z7-APP | 2028-10-29 → 2028-10-21 (-8d) | 2028-11-14 → 2028-11-06 (-8d) | -173d → -166d |
| RHD4HOASZ7APPCCTV210 | Review and Approval of As-Built Drawings for Security Network for CCTV-Z7-APP | 2028-11-05 → 2028-11-01 (-4d) | 2028-11-22 → 2028-11-19 (-3d) | -182d → -179d |
| RHD4HOASZ7APPRD220 | Review and Approval of As-Built Drawings for Road Works( KERBING AND PAVEMENT ) for RD-Z7-APP | 2028-11-29 → 2028-11-26 (-3d) | 2028-12-05 → 2028-12-02 (-3d) | -196d → -193d |
| RHD4HOASZ7APPICT200 | Review and Approval of As-Built Drawings for Information and Communication Technologies Network for ICT-Z7-APP | 2028-12-20 → 2028-12-17 (-3d) | 2028-12-28 → 2028-12-25 (-3d) | -197d → -194d |
| 9252 | **RHD4-02-002-As Built Drawing Approvals-Z8** | 2028-02-13 → 2028-02-08 (-5d) | 2029-01-07 → 2029-01-03 (-4d) |  |
| RHD4HOASZ8APPLV160 | Review and Approval of As-Built Drawings for Low Voltage Network for LV-Z8-APP | 2028-02-13 → 2028-02-08 (-5d) | 2028-02-21 → 2028-02-16 (-5d) | -126d → -122d |
| RHD4HOASZ8APPMV150 | Review and Approval of As-Built Drawings for Medium Voltage Network for MV-Z8-APP | 2028-10-12 → 2028-10-04 (-8d) | 2028-10-30 → 2028-10-22 (-8d) | -146d → -139d |
| RHD4HOASZ8APPTC190 | Review and Approval of As-Built Drawings for Telecommunications Network for TC-Z8-APP | 2028-10-18 → 2028-10-12 (-6d) | 2028-11-04 → 2028-10-29 (-6d) | -149d → -144d |
| RHD4HOASZ8APPIRR140 | Review and Approval of As-Built Drawings for Irrigation Network for IRR-Z8-APP | 2028-10-31 → 2028-10-23 (-8d) | 2028-11-08 → 2028-10-31 (-8d) | -146d → -139d |
| RHD4HOASZ8APPPT130 | Review and Approval of As-Built Drawings for Potable Water Network for PT-Z8-APP | 2028-10-31 → 2028-10-23 (-8d) | 2028-11-08 → 2028-10-31 (-8d) | -146d → -139d |
| RHD4HOASZ8APPST110 | Review and Approval of As-Built Drawings for Storm Water Network for ST-Z8-APP | 2028-10-31 → 2028-10-23 (-8d) | 2028-11-08 → 2028-10-31 (-8d) | -146d → -139d |
| RHD4HOASZ8APPSW120 | Review and Approval of As-Built Drawings for Sewage Network for SW-Z8-APP | 2028-10-31 → 2028-10-23 (-8d) | 2028-11-08 → 2028-10-31 (-8d) | -146d → -139d |
| RHD4HOASZ8APPSL170 | Review and Approval of As-Built Drawings for Street Lighting Network for SL-Z8-APP | 2028-11-15 → 2028-11-07 (-8d) | 2028-12-02 → 2028-11-23 (-9d) | -173d → -166d |
| RHD4HOASZ8APPCCTV210 | Review and Approval of As-Built Drawings for Security Network for CCTV-Z8-APP | 2028-11-23 → 2028-11-20 (-3d) | 2028-12-11 → 2028-12-07 (-4d) | -182d → -179d |
| RHD4HOASZ8APPEW100 | Review and Approval of As-Built Drawings for Road Plans and Profile for EW-Z8-APP | 2028-12-04 → 2028-11-30 (-4d) | 2028-12-12 → 2028-12-09 (-3d) | -198d → -195d |
| RHD4HOASZ8APPRD220 | Review and Approval of As-Built Drawings for Road Works( KERBING AND PAVEMENT ) for RD-Z8-APP | 2028-12-06 → 2028-12-03 (-3d) | 2028-12-19 → 2028-12-16 (-3d) | -196d → -193d |
| RHD4HOASZ8APPICT200 | Review and Approval of As-Built Drawings for Information and Communication Technologies Network for ICT-Z8-APP | 2028-12-30 → 2028-12-26 (-4d) | 2029-01-07 → 2029-01-03 (-4d) | -197d → -194d |
| 9253 | **RHD4-02-002-As Built Drawing Approvals-Z9** | 2028-02-23 → 2028-02-17 (-6d) | 2029-01-16 → 2029-01-13 (-3d) |  |
| RHD4HOASZ9APPLV160 | Review and Approval of As-Built Drawings for Low Voltage Network for LV-Z9-APP | 2028-02-23 → 2028-02-17 (-6d) | 2028-03-06 → 2028-03-01 (-5d) | -126d → -122d |
| RHD4HOASZ9APPMV150 | Review and Approval of As-Built Drawings for Medium Voltage Network for MV-Z9-APP | 2028-10-31 → 2028-10-23 (-8d) | 2028-11-18 → 2028-11-09 (-9d) | -146d → -139d |
| RHD4HOASZ9APPTC190 | Review and Approval of As-Built Drawings for Telecommunications Network for TC-Z9-APP | 2028-11-05 → 2028-10-30 (-6d) | 2028-11-21 → 2028-11-15 (-6d) | -149d → -144d |
| RHD4HOASZ9APPIRR140 | Review and Approval of As-Built Drawings for Irrigation Network for IRR-Z9-APP | 2028-11-09 → 2028-11-01 (-8d) | 2028-11-18 → 2028-11-09 (-9d) | -146d → -139d |
| RHD4HOASZ9APPPT130 | Review and Approval of As-Built Drawings for Potable Water Network for PT-Z9-APP | 2028-11-09 → 2028-11-01 (-8d) | 2028-11-18 → 2028-11-09 (-9d) | -146d → -139d |
| RHD4HOASZ9APPST110 | Review and Approval of As-Built Drawings for Storm Water Network for ST-Z9-APP | 2028-11-09 → 2028-11-01 (-8d) | 2028-11-18 → 2028-11-09 (-9d) | -146d → -139d |
| RHD4HOASZ9APPSW120 | Review and Approval of As-Built Drawings for Sewage Network for SW-Z9-APP | 2028-11-09 → 2028-11-01 (-8d) | 2028-11-18 → 2028-11-09 (-9d) | -146d → -139d |
| RHD4HOASZ9APPSL170 | Review and Approval of As-Built Drawings for Street Lighting Network for SL-Z9-APP | 2028-12-03 → 2028-11-25 (-8d) | 2028-12-19 → 2028-12-11 (-8d) | -173d → -166d |
| RHD4HOASZ9APPCCTV210 | Review and Approval of As-Built Drawings for Security Network for CCTV-Z9-APP | 2028-12-12 → 2028-12-09 (-3d) | 2028-12-30 → 2028-12-26 (-4d) | -182d → -179d |
| RHD4HOASZ9APPEW100 | Review and Approval of As-Built Drawings for Road Plans and Profile for EW-Z9-APP | 2028-12-13 → 2028-12-10 (-3d) | 2028-12-21 → 2028-12-18 (-3d) | -198d → -195d |
| RHD4HOASZ9APPRD220 | Review and Approval of As-Built Drawings for Road Works( KERBING AND PAVEMENT ) for RD-Z9-APP | 2028-12-20 → 2028-12-17 (-3d) | 2029-01-07 → 2029-01-03 (-4d) | -189d → -186d |
| RHD4HOASZ9APPICT200 | Review and Approval of As-Built Drawings for Information and Communication Technologies Network for ICT-Z9-APP | 2029-01-08 → 2029-01-04 (-4d) | 2029-01-16 → 2029-01-13 (-3d) | -197d → -194d |
| 9254 | **RHD4-02-002-As Built Drawing Approvals-Tunne 1 - TUN1** | 2028-05-11 → 2028-05-08 (-3d) | 2028-06-21 → 2028-06-18 (-3d) |  |
| RHD4HOASTUN1APP1000 | Review and Approval of As-Built Drawings for TUNNEL 1 (PLANS) -Z5 for -TUN1-APP | 2028-05-11 → 2028-05-08 (-3d) | 2028-05-24 → 2028-05-21 (-3d) | -179d → -176d |
| RHD4HOASTUN1APP1100 | Review and Approval of As-Built Drawings for TUNNEL 1 (SECTIONS) -Z5 for -TUN1-APP | 2028-05-25 → 2028-05-22 (-3d) | 2028-06-07 → 2028-06-04 (-3d) | -179d → -176d |
| RHD4HOASTUN1APP1200 | Review and Approval of As-Built Drawings for TUNNEL 1 (BBS) -Z5 for -TUN1-APP | 2028-06-08 → 2028-06-05 (-3d) | 2028-06-21 → 2028-06-18 (-3d) | -179d → -176d |
| 9256 | **RHD4-02-002-As Built Drawing Approvals-Sewage Lift Station 1 - SWL1** | 2028-04-24 → 2028-04-20 (-4d) | 2028-06-21 → 2028-06-18 (-3d) |  |

| ID | Task | Start | Finish | Total float |
| --- | --- | --- | --- | --- |
| RHD4HOASSWL1APP1000 | Review and Approval of As-Built Drawings for Sewage Lift Station 1 - Z3 - Structure Package for -SWL1-APP | 2028-04-24 → 2028-04-20 (-4d) | 2028-05-10 → 2028-05-03 (-7d) | -170d → -167d |
| RHD4HOASSWL1APP1100 | Review and Approval of As-Built Drawings for Sewage Lift Station 1 - Z3 - Architecture Package for -SWL1-APP | 2028-05-11 → 2028-05-08 (-3d) | 2028-05-24 → 2028-05-21 (-3d) | -170d → -167d |
| RHD4HOASSWL1APP1200 | Review and Approval of As-Built Drawings for Sewage Lift Station 1 - Z3 - Mechanical Package for -SWL1-APP | 2028-05-25 → 2028-05-22 (-3d) | 2028-06-07 → 2028-06-04 (-3d) | -170d → -167d |
| RHD4HOASSWL1APP1300 | Review and Approval of As-Built Drawings for Sewage Lift Station 1 - Z3 - Electrical Package for -SWL1-APP | 2028-06-08 → 2028-06-05 (-3d) | 2028-06-21 → 2028-06-18 (-3d) | -170d → -167d |
| 9258 | **RHD4-02-002-As Built Drawing Approvals-Storm Lift Station 1 - STL1** | 2028-08-19 → 2028-08-13 (-6d) | 2028-10-16 → 2028-10-12 (-4d) |  |
| RHD4HOASSTL1APP1000 | Review and Approval of As-Built Drawings for Storm Lift Station 1 - Z5 - Structure Package for -STL1-APP | 2028-08-19 → 2028-08-13 (-6d) | 2028-08-23 → 2028-08-17 (-6d) | -179d → -174d |
| RHD4HOASSTL1APP1100 | Review and Approval of As-Built Drawings for Storm Lift Station 1 - Z5 - Architecture Package for -STL1-APP | 2028-09-30 → 2028-09-26 (-4d) | 2028-10-04 → 2028-10-01 (-3d) | -167d → -164d |
| RHD4HOASSTL1APP1200 | Review and Approval of As-Built Drawings for Storm Lift Station 1 - Z5 - Mechanical Package for -STL1-APP | 2028-10-05 → 2028-10-02 (-3d) | 2028-10-10 → 2028-10-07 (-3d) | -167d → -164d |
| RHD4HOASSTL1APP1300 | Review and Approval of As-Built Drawings for Storm Lift Station 1 - Z5 - Electrical Package for -STL1-APP | 2028-10-11 → 2028-10-08 (-3d) | 2028-10-16 → 2028-10-12 (-4d) | -167d → -164d |
| 9260 | **RHD4-02-002-Operational Spares - OS** | 2028-10-26 → 2028-10-23 (-3d) | 2028-11-01 → 2028-10-29 (-3d) |  |
| RHD4GNHOOS1214 | Supply Operational Spares - OS | 2028-10-26 → 2028-10-23 (-3d) | 2028-11-01 → 2028-10-29 (-3d) | -167d → -164d |
| 9261 | **RHD4-02-002-Warranties and Guarantees - WG** | 2028-11-02 → 2028-10-30 (-3d) | 2028-11-15 → 2028-11-12 (-3d) |  |
| RHD4GNHOWG1215 | Warranties and Guarantess - WG | 2028-11-02 → 2028-10-30 (-3d) | 2028-11-15 → 2028-11-12 (-3d) | -167d → -164d |
| 9262 | **RHD4-02-002-Training and Manuals** | 2028-10-17 → 2028-10-14 (-3d) | 2028-11-19 → 2028-11-15 (-4d) |  |
| 9263 | **RHD4-02-002-Training** | 2028-11-16 → 2028-11-13 (-3d) | 2028-11-19 → 2028-11-15 (-4d) |  |
| RHD4GNHOFM1216 | Training - FM | 2028-11-16 → 2028-11-13 (-3d) | 2028-11-19 → 2028-11-15 (-4d) | -167d → -164d |
| 9264 | **RHD4-02-002-Manuals** | 2028-10-17 → 2028-10-14 (-3d) | 2028-10-25 → 2028-10-22 (-3d) |  |
| RHD4GNHOFM1217 | Manuals - FM | 2028-10-17 → 2028-10-14 (-3d) | 2028-10-25 → 2028-10-22 (-3d) | -167d → -164d |
| 9265 | **RHD4-02-002-Demobilization** | 2028-12-23 → 2028-12-19 (-4d) | 2029-01-17 → 2029-01-14 (-3d) |  |
| 9266 | **RHD4-02-002-Demobilization of Manpoer** | 2028-12-23 → 2028-12-19 (-4d) | 2028-12-26 → 2028-12-23 (-3d) |  |
| RHD4GNHODMOB1000 | Demobilize Manpower - DMOB | 2028-12-23 → 2028-12-19 (-4d) | 2028-12-26 → 2028-12-23 (-3d) | -198d → -195d |
| 9267 | **RHD4-02-002-Removal of Euipment from the Site** | 2028-12-27 → 2028-12-24 (-3d) | 2028-12-31 → 2028-12-27 (-4d) |  |
| RHD4GNHODMOB1100 | Removal Equipments from The site - DMOB | 2028-12-27 → 2028-12-24 (-3d) | 2028-12-31 → 2028-12-27 (-4d) | -198d → -195d |
| 9268 | **RHD4-02-002-Site Clean - up** | 2029-01-01 → 2028-12-28 (-4d) | 2029-01-06 → 2029-01-02 (-4d) |  |
| RHD4GNHODMOB1200 | Site Clean Up - DMOB | 2029-01-01 → 2028-12-28 (-4d) | 2029-01-06 → 2029-01-02 (-4d) | -198d → -195d |
| 9269 | **RHD4-02-002-Removal of Site Offices and Structure** | 2029-01-07 → 2029-01-03 (-4d) | 2029-01-10 → 2029-01-07 (-3d) |  |
| RHD4GNHODMOB1300 | Removal of Site Offices and Structures - DMOB | 2029-01-07 → 2029-01-03 (-4d) | 2029-01-10 → 2029-01-07 (-3d) | -198d → -195d |
| 9270 | **RHD4-02-002-Restoration of Ground Surfaces** | 2029-01-11 → 2029-01-08 (-3d) | 2029-01-17 → 2029-01-14 (-3d) |  |
| RHD4GNHODMOB1400 | Restoration of Ground Surface - DMOB | 2029-01-11 → 2029-01-08 (-3d) | 2029-01-17 → 2029-01-14 (-3d) | -198d → -195d |
