# Industrial City in Alkharj - Modon (Revised Schedule)

How a schedule from Primavera P6 changed from version to version. A marks actual dates.

## Version 1 (data date 2025-12-03, saved 2026-10-25, file ICKM01-22.Oct.2026-4.xer)

| ID | WBS | Task | Duration | Start | Finish | Predecessors | Total float | Constraint |
| --- | --- | --- | --- | --- | --- | --- | --- | --- |
|  | GNE | **GENERAL** |  | 2025-12-03 | 2027-12-02 |  |  |  |
|  | MIL | **Milestones** |  | 2025-12-03 | 2027-12-02 |  |  |  |
| A1120 |  | Start Project Commencement Date and Receiving IFC documents | 0d | 2025-12-03 | 2025-12-03 |  | 0d | start on or before 2025-12-03 |
| A4750 |  | Site preparation, plans, material and engineering submittals | 0d | 2026-01-01 | 2026-01-01 | A1010 FF, A1070 FF, A1080 FF, A1090 FF, A1100 FF, A1110 FF, A1180 FF, A1190 FF, A1200 FF, A1210 FF, A1220 FF, A1260 FF, A1270 FF, A1280 FF, A1340 FF, A1350 FF, A1360 FF, A1370 FF, A1380 FF, A1440 FF, A1450 FF, A1460 FF, A1470 FF, A1480 FF, A1540 FF, A1550 FF, A1560 FF, A1570 FF, A1580 FF, A1650 FF, A1660 FF, A1670 FF, A1680 FF, A1690 FF, A1700 FF, A1760 FF, A1770 FF, A1780 FF, A1790 FF, A1800 FF, A1870 FF, A1880 FF, A1890 FF, A1900 FF, A1910 FF, A1920 FF, A1980 FF, A1990 FF, A2000 FF, A2010 FF, A2020 FF, A2060 FF, A2070 FF, A2080 FF, A2140 FF, A2150 FF, A2160 FF, A2170 FF, A2180 FF, A2240 FF, A2250 FF, A2260 FF, A2270 FF, A2280 FF, A2340 FF, A2350 FF, A2360 FF, A2370 FF, A2380 FF, A2440 FF, A2450 FF, A2460 FF, A2470 FF, A2480 FF, A2500 FF, A2560 FF, A2570 FF, A2580 FF, A2590 FF, A2600 FF, A2620 FF, A2680 FF, A2690 FF, A2700 FF, A2710 FF, A2720 FF, A2740 FF, A2760 FF, A2820 FF, A2830 FF, A2840 FF, A2850 FF, A2860 FF, A4900 FF, A4910 FF, A4920 FF, A4930 FF, A4940 FF, A5000 FF, A5010 FF, A5020 FF, A5030 FF, A5040 FF, A5100 FF, A5110 FF, A5120 FF, A5130 FF, A5140 FF, A5200 FF, A5210 FF, A5220 FF, A5230 FF, A5240 FF, A5300 FF, A5310 FF, A5320 FF, A5330 FF, A5340 FF, A5400 FF, A5410 FF, A5420 FF, A5430 FF, A5440 FF, A4760 FF | 0d | finish on or before 2026-01-03 |
| A4800 |  | Completion of Road Works | 0d | 2026-10-01 | 2026-10-01 | A66740 FF, A56670, A62590, A56810, A56950, A57090, A57230, A57370, A57510, A57650, A57790, A57930, A58070, A58210, A58350, A58490, A58630, A58770, A58910, A62760, A64660, A64800, A64940, A62940, A63080, A63220, A63360, A63920, A64060, A63500, A63640, A63780 | 0d | finish on or before 2026-10-03 |
| A4810 |  | Completion of MV works | 0d | 2026-10-01 | 2026-10-01 | A93200 FF, A93210 FF | 0d | finish on or before 2026-10-03 |
| A4820 |  | Completion of Sewage Network | 0d | 2027-02-01 | 2027-02-01 | A93220 FF, A93240 FF | 1d | finish on or before 2027-02-03 |
| A4825 |  | Completion of Irrigation Network | 0d | 2027-02-01 | 2027-02-01 | A88680 FF, A88750 FF, A88820 FF, A88890 FF, A89030 FF, A89100 FF, A89170 FF, A89240 FF, A89310 FF, A89380 FF, A89450 FF, A89520 FF, A89590 FF, A89660 FF, A89730 FF, A89800 FF, A89870 FF, A88960 FF, A90010 FF, A90080 FF, A90150 FF, A90220 FF, A90290 FF, A90360 FF, A89940 FF, A90430 FF, A90500 FF, A90570 FF, A90850 FF, A90920 FF, A90780 FF, A90640 FF, A90710 FF | 2d | finish on or before 2027-02-03 |
| A6800 |  | Completion of Potable water Network | 0d | 2027-02-01 | 2027-02-01 | A93180 FF, A93190 FF | 2d | finish on or before 2027-02-03 |
| A4845 |  | Completion of Telecommunication | 0d | 2027-02-02 | 2027-02-02 | A91880 FF, A91930 FF, A91980 FF, A92080 FF, A92030 FF, A92130 FF, A92180 FF, A92230 FF, A92280 FF, A92330 FF, A92380 FF, A92430 FF, A92480 FF, A92530 FF, A92580 FF, A92630 FF, A91480 FF, A91530 FF, A91580 FF, A91630 FF, A91430 FF, A91680 FF, A91730 FF, A91780 FF, A90980 FF, A91030 FF, A91080 FF, A91130 FF, A91180 FF, A91230 FF, A91280 FF, A91330 FF, A91380 FF, A91830 FF | 1d | finish on or before 2027-02-03 |
| A4815 |  | Completion of Storm Network | 0d | 2027-02-03 | 2027-02-03 | A93250 FF, A93230 FF, A73170, A88330 | 0d | finish on or before 2027-02-03 |
| A4835 |  | Completion of Landscape | 0d | 2027-12-01 | 2027-12-01 | A59040 FF, A59050 FF, A59060 FF, A59070 FF, A59080 FF, A59100 FF, A59110 FF, A59120 FF, A59130 FF, A59140 FF, A59150 FF, A59160 FF, A59170 FF, A59180 FF, A59190 FF, A59900 FF, A59910 FF, A59920 FF, A59930 FF, A59940 FF, A59960 FF, A59970 FF, A59980 FF, A59990 FF, A60000 FF, A60010 FF, A59860 FF, A59870 FF, A59880 FF, A59890 FF, A60060 FF, A60070 FF, A60080 FF, A60090 FF, A60100 FF, A60120 FF, A60130 FF, A60140 FF, A60150 FF, A60160 FF, A60170 FF, A60020 FF, A60030 FF, A60040 FF, A60050 FF, A60220 FF, A60230 FF, A60240 FF, A60250 FF, A60260 FF, A60280 FF, A60290 FF, A60300 FF, A60310 FF, A60320 FF, A60330 FF, A60180 FF, A60190 FF, A60200 FF, A60210 FF, A60380 FF, A60390 FF, A60400 FF, A60410 FF, A60420 FF, A60440 FF, A60450 FF, A60460 FF, A60470 FF, A60480 FF, A60490 FF, A60340 FF, A60350 FF, A60360 FF, A60370 FF, A60540 FF, A60550 FF, A60560 FF, A60570 FF, A60580 FF, A60600 FF, A60610 FF, A60620 FF, A60630 FF, A60640 FF, A60650 FF, A60500 FF, A60510 FF, A60520 FF, A60530 FF, A60700 FF, A60710 FF, A60720 FF, A60730 FF, A60740 FF, A60760 FF, A60770 FF, A60780 FF, A60790 FF, A60800 FF, A60810 FF, A60660 FF, A60670 FF, A60680 FF, A60690 FF, A60860 FF, A60870 FF, A60880 FF, A60890 FF, A60900 FF, A60920 FF, A60930 FF, A60940 FF, A60950 FF, A60960 FF, A60970 FF, A60820 FF, A60830 FF, A60840 FF, A60850 FF, A61020 FF, A61030 FF, A61040 FF, A61050 FF, A61060 FF, A61080 FF, A61090 FF, A61100 FF, A61110 FF, A61120 FF, A61130 FF, A60980 FF, A60990 FF, A61000 FF, A61010 FF, A61180 FF, A61190 FF, A61200 FF, A61210 FF, A61220 FF, A61240 FF, A61250 FF, A61260 FF, A61270 FF, A61280 FF, A61290 FF, A61140 FF, A61150 FF, A61160 FF, A61170 FF, A61340 FF, A61350 FF, A61360 FF, A61370 FF, A61380 FF, A61400 FF, A61410 FF, A61420 FF, A61430 FF, A61440 FF, A61450 FF, A61300 FF, A61310 FF, A61320 FF, A61330 FF, A61500 FF, A61510 FF, A61520 FF, A61530 FF, A61540 FF, A61560 FF, A61570 FF, A61580 FF, A61590 FF, A61600 FF, A61610 FF, A61460 FF, A61470 FF, A61480 FF, A61490 FF, A61660 FF, A61670 FF, A61680 FF, A61690 FF, A61700 FF, A61720 FF, A61730 FF, A61740 FF, A61750 FF, A61760 FF, A61770 FF, A61620 FF, A61630 FF, A61640 FF, A61650 FF, A61820 FF, A61830 FF, A61840 FF, A61850 FF, A61860 FF, A61880 FF, A61890 FF, A61900 FF, A61910 FF, A61920 FF, A61930 FF, A61780 FF, A61790 FF, A61800 FF, A61810 FF, A61980 FF, A61990 FF, A62000 FF, A62010 FF, A62020 FF, A62040 FF, A62050 FF, A62060 FF, A62070 FF, A62080 FF, A62090 FF, A61940 FF, A61950 FF, A61960 FF, A61970 FF, A62140 FF, A62150 FF, A62160 FF, A62170 FF, A62180 FF, A62200 FF, A62210 FF, A62220 FF, A62230 FF, A62240 FF, A62250 FF, A62100 FF, A62110 FF, A62120 FF, A62130 FF, A62300 FF, A62310 FF, A62320 FF, A62330 FF, A62340 FF, A62360 FF, A62370 FF, A62380 FF, A62390 FF, A62400 FF, A62410 FF, A62260 FF, A62270 FF, A62280 FF, A62290 FF, A62460 FF, A62470 FF, A62480 FF, A62490 FF, A62500 FF, A62520 FF, A62530 FF, A62540 FF, A62550 FF, A62560 FF, A62570 FF, A62420 FF, A62430 FF, A62440 FF, A62450 FF, A64190 FF, A64200 FF, A64210 FF, A64220 FF, A64230 FF, A64250 FF, A64260 FF, A64270 FF, A64280 FF, A64290 FF, A64300 FF, A64310 FF, A64320 FF, A64330 FF, A64340 FF, A65070 FF, A65080 FF, A65090 FF, A65100 FF, A65110 FF, A65130 FF, A65140 FF, A65150 FF, A65160 FF, A65170 FF, A65180 FF, A65030 FF, A65040 FF, A65050 FF, A65060 FF, A65230 FF, A65240 FF, A65250 FF, A65260 FF, A65270 FF, A65290 FF, A65300 FF, A65310 FF, A65320 FF, A65330 FF, A65340 FF, A65190 FF, A65200 FF, A65210 FF, A65220 FF, A65390 FF, A65400 FF, A65410 FF, A65420 FF, A65430 FF, A65450 FF, A65460 FF, A65470 FF, A65480 FF, A65490 FF, A65500 FF, A65350 FF, A65360 FF, A65370 FF, A65380 FF, A65550 FF, A65560 FF, A65570 FF, A65580 FF, A65590 FF, A65610 FF, A65620 FF, A65630 FF, A65640 FF, A65650 FF, A65660 FF, A65510 FF, A65520 FF, A65530 FF, A65540 FF, A65710 FF, A65720 FF, A65730 FF, A65740 FF, A65750 FF, A65770 FF, A65780 FF, A65790 FF, A65800 FF, A65810 FF, A65820 FF, A65670 FF, A65680 FF, A65690 FF, A65700 FF, A65870 FF, A65880 FF, A65890 FF, A65900 FF, A65910 FF, A65930 FF, A65940 FF, A65950 FF, A65960 FF, A65970 FF, A65980 FF, A65830 FF, A65840 FF, A65850 FF, A65860 FF, A66030 FF, A66040 FF, A66050 FF, A66060 FF, A66070 FF, A66090 FF, A66100 FF, A66110 FF, A66120 FF, A66130 FF, A66140 FF, A65990 FF, A66000 FF, A66010 FF, A66020 FF, A66790 FF, A66800 FF, A66810 FF, A66820 FF, A66830 FF, A66850 FF, A66860 FF, A66870 FF, A66880 FF, A66890 FF, A66900 FF, A66750 FF, A66760 FF, A66770 FF, A66780 FF, A66950 FF, A66960 FF, A66970 FF, A66980 FF, A66990 FF, A67010 FF, A67020 FF, A67030 FF, A67040 FF, A67050 FF, A67060 FF, A66910 FF, A66920 FF, A66930 FF, A66940 FF, A66190 FF, A66200 FF, A66210 FF, A66220 FF, A66230 FF, A66250 FF, A66260 FF, A66270 FF, A66280 FF, A66290 FF, A66300 FF, A66150 FF, A66160 FF, A66170 FF, A66180 FF, A66460 FF, A66340 FF, A66570 FF, A66580 FF, A66590 FF, A66600 FF, A66610 FF, A66620 FF, A66470 FF, A66480 FF, A66490 FF, A66500 FF, A86420 FF, A86470 FF, A86520 FF, A86570 FF, A11230 | 1d | finish on or before 2027-12-02 |
| A4830 |  | Project Finish | 0d | 2027-12-02 | 2027-12-02 | A92700 FF, A84230 FF, A84280 FF, A84330 FF, A92710 FF, A4750 FF, A4845 FF, A4810 FF, A4800 FF, A4815 FF, A4835 FF, A4820 FF, A4825 FF, A6800 FF, A93710 FF, A93720, A56790, A62920, A63060, A63200, A63340, A63480, A63620, A63760, A63900, A62710, A56930, A58610, A58750, A58890, A59030, A62880, A64780, A64920, A57070, A57210, A57350, A57490, A57630, A57770, A57910, A58050, A58190, A58330, A58470, A66740, A63990, A64000, A64020, A64040, A64180, A93730, A93740, A93750, A93760 | 0d | finish on or before 2027-12-02 |
|  | PRE-MOB | **Pre-Mobilization** |  | 2025-12-03 | 2026-01-04 |  |  |  |
|  | 1 | **General Requirements** |  | 2025-12-03 | 2026-01-04 |  |  |  |
|  | 1 | **Submittals** |  | 2025-12-03 | 2025-12-27 |  |  |  |
| A4260 |  | Material List Submittal | 21d | 2025-12-03 | 2025-12-27 | A1120 SS | 78d |  |
| A4640 |  | Offices Moblization Layout Sumittal | 10d | 2025-12-03 | 2025-12-14 | A1120 SS | 0d |  |
| A4660 |  | Traffic Management Plan Submittal | 21d | 2025-12-03 | 2025-12-27 | A1120 SS | 38d |  |
| A4670 |  | Logistics Plan Submittal | 21d | 2025-12-03 | 2025-12-27 | A1120 SS | 38d |  |
| A4680 |  | Execution Plan Submittal | 21d | 2025-12-03 | 2025-12-27 | A1120 SS | 38d |  |
| A4690 |  | Safety Mangment plan Submittal | 21d | 2025-12-03 | 2025-12-27 | A1120 SS | 38d |  |
| A4700 |  | Geotechnical Report Submittal | 21d | 2025-12-03 | 2025-12-27 | A1120 SS | 38d |  |
| A4710 |  | Project Quality Plan Submittal | 21d | 2025-12-03 | 2025-12-27 | A1120 SS | 38d |  |
| A4720 |  | Baseline Schedule Submittal | 21d | 2025-12-03 | 2025-12-27 | A1120 SS | 38d |  |
|  | 2 | **Approvals** |  | 2025-12-15 | 2026-01-04 |  |  |  |
| A4650 |  | Offices Moblization Layout Approval | 3d | 2025-12-15 | 2025-12-17 | A4640 | 0d |  |
| A2930 |  | Traffic Management Plan Approval | 7d | 2025-12-28 | 2026-01-04 | A4660 | 38d |  |
| A2940 |  | Logistics Plan Approval | 7d | 2025-12-28 | 2026-01-04 | A4670 | 38d |  |
| A2950 |  | Execution Plan Approval | 7d | 2025-12-28 | 2026-01-04 | A4680 | 38d |  |
| A2960 |  | Safety Mangment plan Approval | 7d | 2025-12-28 | 2026-01-04 | A4690 | 38d |  |
| A2970 |  | Geotechnical Report Approval | 7d | 2025-12-28 | 2026-01-04 | A4700 | 38d |  |
| A2980 |  | Project Quality Plan Approval | 7d | 2025-12-28 | 2026-01-04 | A4710 | 38d |  |
| A2990 |  | Baseline Schedule Approval | 7d | 2025-12-28 | 2026-01-04 | A4720 | 38d |  |
| A4270 |  | Material List Approval | 7d | 2025-12-28 | 2026-01-04 | A4260 | 78d |  |
|  | MOB | **Mobilization** |  | 2025-12-18 | 2026-01-01 |  |  |  |
| A4730 |  | Clear & Grub for Offices & Access Road | 6d | 2025-12-18 | 2025-12-24 | A4650, A1120 SS | 0d |  |
| A4770 |  | Construct Site Offices & Storage | 13d | 2025-12-18 | 2026-01-01 | A4780 SS, A4780 FF | 0d |  |
| A4780 |  | Construct Temporary Fence | 13d | 2025-12-18 | 2026-01-01 | A4730 SS, A4730 FF | 0d |  |
| A4760 |  | Construct Parking Sheds | 12d | 2025-12-20 | 2026-01-01 | A4770 SS, A4770 FF | 0d |  |
|  | ENG | **ENGINEERING** |  | 2025-12-03 | 2026-01-04 |  |  |  |
|  | ZN1 | **Zone A** |  | 2025-12-03 | 2026-01-01 |  |  |  |
|  | EW | **Earth Work** |  | 2025-12-03 | 2026-01-01 |  |  |  |
|  | SB | **Submittals** |  | 2025-12-03 | 2025-12-18 |  |  |  |
| A1000 |  | NGL Submittal | 14d | 2025-12-03 | 2025-12-18 | A1120 SS | 0d |  |
|  | APP | **Approvals** |  | 2025-12-20 | 2026-01-01 |  |  |  |
| A1010 |  | NGL Approval | 12d | 2025-12-20 | 2026-01-01 | A1000 | 0d |  |
|  | ST | **Storm Network Drawings** |  | 2025-12-03 | 2026-01-01 |  |  |  |
|  | SB | **Submittals** |  | 2025-12-03 | 2025-12-18 |  |  |  |
| A1020 |  | Overall Layout Plan Submittal | 14d | 2025-12-03 | 2025-12-18 | A1120 SS | 0d |  |
| A1030 |  | Plan & Profiles Submittal | 14d | 2025-12-03 | 2025-12-18 | A1120 SS | 0d |  |
| A1040 |  | General Typical Plans Submittal | 14d | 2025-12-03 | 2025-12-18 | A1120 SS | 0d |  |
| A1050 |  | Storm Tie - In Details Submittal | 14d | 2025-12-03 | 2025-12-18 | A1120 SS | 0d |  |
| A1060 |  | Chamber Details Submittal | 14d | 2025-12-03 | 2025-12-18 | A1120 SS | 0d |  |
|  | APP | **Approvals** |  | 2025-12-20 | 2026-01-01 |  |  |  |
| A1070 |  | Overall Layout Plan Approval | 12d | 2025-12-20 | 2026-01-01 | A1020 | 0d |  |
| A1080 |  | Plan & Profiles Approval | 12d | 2025-12-20 | 2026-01-01 | A1030 | 0d |  |
| A1090 |  | General Typical Plans Approval | 12d | 2025-12-20 | 2026-01-01 | A1040 | 0d |  |
| A1100 |  | Storm Tie - In Details Approval | 12d | 2025-12-20 | 2026-01-01 | A1050 | 0d |  |
| A1110 |  | Chamber Details Approval | 12d | 2025-12-20 | 2026-01-01 | A1060 | 0d |  |
|  | SW | **Sewage Network Drawings** |  | 2025-12-03 | 2026-01-01 |  |  |  |
|  | SB | **Submittals** |  | 2025-12-03 | 2025-12-18 |  |  |  |
| A1130 |  | Overall Layout Plan Submittal | 14d | 2025-12-03 | 2025-12-18 | A1120 SS | 0d |  |
| A1140 |  | Plan & Profiles Submittal | 14d | 2025-12-03 | 2025-12-18 | A1120 SS | 0d |  |
| A1150 |  | General Typical Plans Submittal | 14d | 2025-12-03 | 2025-12-18 | A1120 SS | 0d |  |
| A1160 |  | Sewage Tie - In Details Submittal | 14d | 2025-12-03 | 2025-12-18 | A1120 SS | 0d |  |
| A1170 |  | Chamber Details Submittal | 14d | 2025-12-03 | 2025-12-18 | A1120 SS | 0d |  |
|  | APP | **Approvals** |  | 2025-12-20 | 2026-01-01 |  |  |  |
| A1180 |  | Overall Layout Plan Approval | 12d | 2025-12-20 | 2026-01-01 | A1130 | 0d |  |
| A1190 |  | Plan & Profiles Approval | 12d | 2025-12-20 | 2026-01-01 | A1140 | 0d |  |

| ID | WBS | Task | Duration | Start | Finish | Predecessors | Total float |
| --- | --- | --- | --- | --- | --- | --- | --- |
| A1200 |  | General Typical Plans Approval | 12d | 2025-12-20 | 2026-01-01 | A1150 | 0d |
| A1210 |  | Sewage Tie - In Details Approval | 12d | 2025-12-20 | 2026-01-01 | A1160 | 0d |
| A1220 |  | Chamber Details Approval | 12d | 2025-12-20 | 2026-01-01 | A1170 | 0d |
|  | BC | **Box Culverts** |  | 2025-12-03 | 2026-01-01 |  |  |
|  | SB | **Submittals** |  | 2025-12-03 | 2025-12-18 |  |  |
| A1230 |  | Setting out Layout Submittal | 14d | 2025-12-03 | 2025-12-18 | A1120 SS | 0d |
| A1240 |  | Typical Details Submittal | 14d | 2025-12-03 | 2025-12-18 | A1120 SS | 0d |
| A1250 |  | Concrete Dim.& Reinforcement details Submittal | 14d | 2025-12-03 | 2025-12-18 | A1120 SS | 0d |
|  | APP | **Approvals** |  | 2025-12-20 | 2026-01-01 |  |  |
| A1260 |  | Setting out Layout Approval | 12d | 2025-12-20 | 2026-01-01 | A1230 | 0d |
| A1270 |  | Typical Details Approval | 12d | 2025-12-20 | 2026-01-01 | A1240 | 0d |
| A1280 |  | Concrete Dim.& Reinforcement details Approval | 12d | 2025-12-20 | 2026-01-01 | A1250 | 0d |
|  | PT | **Potable Network Drawings** |  | 2025-12-03 | 2026-01-01 |  |  |
|  | SB | **Submittals** |  | 2025-12-03 | 2025-12-18 |  |  |
| A1290 |  | Overall Layout Plan Submittal | 14d | 2025-12-03 | 2025-12-18 | A1120 SS | 0d |
| A1300 |  | Master Plan Submittal | 14d | 2025-12-03 | 2025-12-18 | A1120 SS | 0d |
| A1310 |  | Water Schedules Submittal | 14d | 2025-12-03 | 2025-12-18 | A1120 SS | 0d |
| A1320 |  | General Typical Plans Submittal | 14d | 2025-12-03 | 2025-12-18 | A1120 SS | 0d |
| A1330 |  | General Typical Details Submittal | 14d | 2025-12-03 | 2025-12-18 | A1120 SS | 0d |
|  | APP | **Approvals** |  | 2025-12-20 | 2026-01-01 |  |  |
| A1340 |  | Overall Layout Plan Approval | 12d | 2025-12-20 | 2026-01-01 | A1290 | 0d |
| A1350 |  | Master Plan Approval | 12d | 2025-12-20 | 2026-01-01 | A1300 | 0d |
| A1360 |  | Water Schedules Approval | 12d | 2025-12-20 | 2026-01-01 | A1310 | 0d |
| A1370 |  | General Typical Plans Approval | 12d | 2025-12-20 | 2026-01-01 | A1320 | 0d |
| A1380 |  | General Typical Details Approval | 12d | 2025-12-20 | 2026-01-01 | A1330 | 0d |
|  | IR | **Irrigation Network Drawings** |  | 2025-12-03 | 2026-01-01 |  |  |
|  | SB | **Submittals** |  | 2025-12-03 | 2025-12-18 |  |  |
| A1390 |  | Overall Layout Plan Submittal | 14d | 2025-12-03 | 2025-12-18 | A1120 SS | 0d |
| A1400 |  | Master Plan Submittal | 14d | 2025-12-03 | 2025-12-18 | A1120 SS | 0d |
| A1410 |  | Water Schedules Submittal | 14d | 2025-12-03 | 2025-12-18 | A1120 SS | 0d |
| A1420 |  | General Typical Plans Submittal | 14d | 2025-12-03 | 2025-12-18 | A1120 SS | 0d |
| A1430 |  | General Typical Details Submittal | 14d | 2025-12-03 | 2025-12-18 | A1120 SS | 0d |
|  | APP | **Approvals** |  | 2025-12-20 | 2026-01-01 |  |  |
| A1440 |  | Overall Layout Plan Approval | 12d | 2025-12-20 | 2026-01-01 | A1390 | 0d |
| A1450 |  | Master Plan Approval | 12d | 2025-12-20 | 2026-01-01 | A1400 | 0d |
| A1460 |  | Water Schedules Approval | 12d | 2025-12-20 | 2026-01-01 | A1410 | 0d |
| A1470 |  | General Typical Plans Approval | 12d | 2025-12-20 | 2026-01-01 | A1420 | 0d |
| A1480 |  | General Typical Details Approval | 12d | 2025-12-20 | 2026-01-01 | A1430 | 0d |
|  | EL | **Electrical Network Drawings** |  | 2025-12-03 | 2026-01-01 |  |  |
|  | MV | **Medium Voltage** |  | 2025-12-03 | 2026-01-01 |  |  |
|  | SB | **Submittals** |  | 2025-12-03 | 2025-12-18 |  |  |
| A1490 |  | Overall Layout Plan Submittal | 14d | 2025-12-03 | 2025-12-18 | A1120 SS | 0d |
| A1500 |  | Plan & Profile Submittal | 14d | 2025-12-03 | 2025-12-18 | A1120 SS | 0d |
| A1510 |  | Buried trench & Duct Bank Details Submittal | 14d | 2025-12-03 | 2025-12-18 | A1120 SS | 0d |
| A1520 |  | Cable Schedule Details Submittal | 14d | 2025-12-03 | 2025-12-18 | A1120 SS | 0d |
| A1530 |  | Single Line Diagram Submittal | 14d | 2025-12-03 | 2025-12-18 | A1120 SS | 0d |
|  | APP | **Approvals** |  | 2025-12-20 | 2026-01-01 |  |  |
| A1540 |  | Overall Layout Plan Approval | 12d | 2025-12-20 | 2026-01-01 | A1490 | 0d |
| A1550 |  | Plan & Profile Approval | 12d | 2025-12-20 | 2026-01-01 | A1500 | 0d |
| A1560 |  | Buried trench & Duct Bank Details Approval | 12d | 2025-12-20 | 2026-01-01 | A1510 | 0d |
| A1570 |  | Cable Schedule Details Approval | 12d | 2025-12-20 | 2026-01-01 | A1520 | 0d |
| A1580 |  | Single Line Diagram Approval | 12d | 2025-12-20 | 2026-01-01 | A1530 | 0d |
|  | LV | **Low Voltage/ Street Lighting** |  | 2025-12-03 | 2026-01-01 |  |  |
|  | SB | **Submittals** |  | 2025-12-03 | 2025-12-18 |  |  |
| A4850 |  | Overall Layout Plan Submittal | 14d | 2025-12-03 | 2025-12-18 | A1120 SS | 0d |
| A4860 |  | Plan & Profile Submittal | 14d | 2025-12-03 | 2025-12-18 | A1120 SS | 0d |
| A4870 |  | Buried trench & Duct Bank Details Submittal | 14d | 2025-12-03 | 2025-12-18 | A1120 SS | 0d |
| A4880 |  | Cable Schedule Details Submittal | 14d | 2025-12-03 | 2025-12-18 | A1120 SS | 0d |
| A4890 |  | Single Line Diagram Submittal | 14d | 2025-12-03 | 2025-12-18 | A1120 SS | 0d |
|  | APP | **Approvals** |  | 2025-12-20 | 2026-01-01 |  |  |
| A4900 |  | Overall Layout Plan Approval | 12d | 2025-12-20 | 2026-01-01 | A4850 | 0d |
| A4910 |  | Plan & Profile Approval | 12d | 2025-12-20 | 2026-01-01 | A4860 | 0d |
| A4920 |  | Buried trench & Duct Bank Details Approval | 12d | 2025-12-20 | 2026-01-01 | A4870 | 0d |
| A4930 |  | Cable Schedule Details Approval | 12d | 2025-12-20 | 2026-01-01 | A4880 | 0d |
| A4940 |  | Single Line Diagram Approval | 12d | 2025-12-20 | 2026-01-01 | A4890 | 0d |
|  | ICT | **ICT Network** |  | 2025-12-03 | 2026-01-01 |  |  |
|  | SB | **Submittals** |  | 2025-12-03 | 2025-12-18 |  |  |
| A4950 |  | Overall Layout Plan Submittal | 14d | 2025-12-03 | 2025-12-18 | A1120 SS | 0d |
| A4960 |  | Plan & Profile Submittal | 14d | 2025-12-03 | 2025-12-18 | A1120 SS | 0d |
| A4970 |  | Buried trench & Duct Bank Details Submittal | 14d | 2025-12-03 | 2025-12-18 | A1120 SS | 0d |

| ID | WBS | Task | Duration | Start | Finish | Predecessors | Total float |
| --- | --- | --- | --- | --- | --- | --- | --- |
| A4980 |  | Cable Schedule Details Submittal | 14d | 2025-12-03 | 2025-12-18 | A1120 SS | 0d |
| A4990 |  | Single Line Diagram Submittal | 14d | 2025-12-03 | 2025-12-18 | A1120 SS | 0d |
|  | APP | **Approvals** |  | 2025-12-20 | 2026-01-01 |  |  |
| A5000 |  | Overall Layout Plan Approval | 12d | 2025-12-20 | 2026-01-01 | A4950 | 0d |
| A5010 |  | Plan & Profile Approval | 12d | 2025-12-20 | 2026-01-01 | A4960 | 0d |
| A5020 |  | Buried trench & Duct Bank Details Approval | 12d | 2025-12-20 | 2026-01-01 | A4970 | 0d |
| A5030 |  | Cable Schedule Details Approval | 12d | 2025-12-20 | 2026-01-01 | A4980 | 0d |
| A5040 |  | Single Line Diagram Approval | 12d | 2025-12-20 | 2026-01-01 | A4990 | 0d |
|  | ELB | **Electrical-Building** |  | 2025-12-03 | 2026-01-01 |  |  |
|  | SB | **Submittals** |  | 2025-12-03 | 2025-12-18 |  |  |
| A5050 |  | Overall Layout Plan Submittal | 14d | 2025-12-03 | 2025-12-18 | A1120 SS | 0d |
| A5060 |  | Plan & Profile Submittal | 14d | 2025-12-03 | 2025-12-18 | A1120 SS | 0d |
| A5070 |  | Buried trench & Duct Bank Details Submittal | 14d | 2025-12-03 | 2025-12-18 | A1120 SS | 0d |
| A5080 |  | Cable Schedule Details Submittal | 14d | 2025-12-03 | 2025-12-18 | A1120 SS | 0d |
| A5090 |  | Single Line Diagram Submittal | 14d | 2025-12-03 | 2025-12-18 | A1120 SS | 0d |
|  | APP | **Approvals** |  | 2025-12-20 | 2026-01-01 |  |  |
| A5100 |  | Overall Layout Plan Approval | 12d | 2025-12-20 | 2026-01-01 | A5050 | 0d |
| A5110 |  | Plan & Profile Approval | 12d | 2025-12-20 | 2026-01-01 | A5060 | 0d |
| A5120 |  | Buried trench & Duct Bank Details Approval | 12d | 2025-12-20 | 2026-01-01 | A5070 | 0d |
| A5130 |  | Cable Schedule Details Approval | 12d | 2025-12-20 | 2026-01-01 | A5080 | 0d |
| A5140 |  | Single Line Diagram Approval | 12d | 2025-12-20 | 2026-01-01 | A5090 | 0d |
|  | RD | **Road Works Drawings** |  | 2025-12-03 | 2026-01-01 |  |  |
|  | SB | **Submittals** |  | 2025-12-03 | 2025-12-18 |  |  |
| A1590 |  | Alignment & Setting Out Submittal | 14d | 2025-12-03 | 2025-12-18 | A1120 SS | 0d |
| A1600 |  | Plan and Profile Submittal | 14d | 2025-12-03 | 2025-12-18 | A1120 SS | 0d |
| A1610 |  | Typical Cross Sections Submittal | 14d | 2025-12-03 | 2025-12-18 | A1120 SS | 0d |
| A1620 |  | Cross Sections Details Submittal | 14d | 2025-12-03 | 2025-12-18 | A1120 SS | 0d |
| A1630 |  | Finish Grading Submittal | 14d | 2025-12-03 | 2025-12-18 | A1120 SS | 0d |
| A1640 |  | Road Signing & Marking Roads Submittal | 14d | 2025-12-03 | 2025-12-18 | A1120 SS | 0d |
|  | APP | **Approvals** |  | 2025-12-20 | 2026-01-01 |  |  |
| A1650 |  | Alignment & Setting Out Approval | 12d | 2025-12-20 | 2026-01-01 | A1590 | 0d |
| A1660 |  | Plan & Profile Approval | 12d | 2025-12-20 | 2026-01-01 | A1600 | 0d |
| A1670 |  | Typical Cross Sections Approval | 12d | 2025-12-20 | 2026-01-01 | A1610 | 0d |
| A1680 |  | Cross Sections Details Approval | 12d | 2025-12-20 | 2026-01-01 | A1620 | 0d |
| A1690 |  | Finish Grading Approval | 12d | 2025-12-20 | 2026-01-01 | A1630 | 0d |
| A1700 |  | Road Signing & Marking Roads Approval | 12d | 2025-12-20 | 2026-01-01 | A1640 | 0d |
|  | LS | **Landscape Works Drawings** |  | 2025-12-03 | 2026-01-01 |  |  |
|  | SB | **Submittals** |  | 2025-12-03 | 2025-12-18 |  |  |
| A1710 |  | Hardscape Plans Landscape Submittal | 14d | 2025-12-03 | 2025-12-18 | A1120 SS | 0d |
| A1720 |  | Softscape Plans Landscape Submittal | 14d | 2025-12-03 | 2025-12-18 | A1120 SS | 0d |
| A1730 |  | Details Plans Landscape Submittal | 14d | 2025-12-03 | 2025-12-18 | A1120 SS | 0d |
| A1740 |  | Schedules Plans Landscape Submittal | 14d | 2025-12-03 | 2025-12-18 | A1120 SS | 0d |
| A1750 |  | Lighting Plans Landscape Submittal | 14d | 2025-12-03 | 2025-12-18 | A1120 SS | 0d |
|  | APP | **Approvals** |  | 2025-12-20 | 2026-01-01 |  |  |
| A1760 |  | Hardscape Plans Landscape Approval | 12d | 2025-12-20 | 2026-01-01 | A1710 | 0d |
| A1770 |  | Softscape Plans Landscape Approval | 12d | 2025-12-20 | 2026-01-01 | A1720 | 0d |
| A1780 |  | Details Plans Landscape Approval | 12d | 2025-12-20 | 2026-01-01 | A1730 | 0d |
| A1790 |  | Schedules Plans Landscape Approval | 12d | 2025-12-20 | 2026-01-01 | A1740 | 0d |
| A1800 |  | Lighting Plans Landscape Approval | 12d | 2025-12-20 | 2026-01-01 | A1750 | 0d |
|  | ZN2 | **Zone B** |  | 2025-12-03 | 2026-01-01 |  |  |
|  | EW | **Earth Work** |  | 2025-12-03 | 2026-01-01 |  |  |
|  | SB | **Submittals** |  | 2025-12-03 | 2025-12-18 |  |  |
| A1810 |  | NGL Submittal | 14d | 2025-12-03 | 2025-12-18 | A1120 SS | 0d |
|  | APP | **Approvals** |  | 2025-12-20 | 2026-01-01 |  |  |
| A1870 |  | NGL Approval | 12d | 2025-12-20 | 2026-01-01 | A1810 | 0d |
|  | ST | **Storm Network Drawings** |  | 2025-12-03 | 2026-01-01 |  |  |
|  | SB | **Submittals** |  | 2025-12-03 | 2025-12-18 |  |  |
| A1820 |  | Overall Layout Plan Submittal | 14d | 2025-12-03 | 2025-12-18 | A1120 SS | 0d |
| A1830 |  | Plan & Profiles Submittal | 14d | 2025-12-03 | 2025-12-18 | A1120 SS | 0d |
| A1840 |  | General Typical Plans Submittal | 14d | 2025-12-03 | 2025-12-18 | A1120 SS | 0d |
| A1850 |  | Storm Tie - In Details Submittal | 14d | 2025-12-03 | 2025-12-18 | A1120 SS | 0d |
| A1860 |  | Chamber Details Submittal | 14d | 2025-12-03 | 2025-12-18 | A1120 SS | 0d |
|  | APP | **Approvals** |  | 2025-12-20 | 2026-01-01 |  |  |
| A1880 |  | Overall Layout Plan Approval | 12d | 2025-12-20 | 2026-01-01 | A1820 | 0d |
| A1890 |  | Plan & Profiles Approval | 12d | 2025-12-20 | 2026-01-01 | A1830 | 0d |
| A1900 |  | General Typical Plans Approval | 12d | 2025-12-20 | 2026-01-01 | A1840 | 0d |
| A1910 |  | Storm Tie - In Details Approval | 12d | 2025-12-20 | 2026-01-01 | A1850 | 0d |
| A1920 |  | Chamber Details Approval | 12d | 2025-12-20 | 2026-01-01 | A1860 | 0d |
|  | SW | **Sewage Network Drawings** |  | 2025-12-03 | 2026-01-01 |  |  |
|  | SB | **Submittals** |  | 2025-12-03 | 2025-12-18 |  |  |

| ID | WBS | Task | Duration | Start | Finish | Predecessors | Total float |
| --- | --- | --- | --- | --- | --- | --- | --- |
| A1930 |  | Overall Layout Plan Submittal | 14d | 2025-12-03 | 2025-12-18 | A1120 SS | 0d |
| A1940 |  | Plan & Profiles Submittal | 14d | 2025-12-03 | 2025-12-18 | A1120 SS | 0d |
| A1950 |  | General Typical Plans Submittal | 14d | 2025-12-03 | 2025-12-18 | A1120 SS | 0d |
| A1960 |  | Sewage Tie - In Details Submittal | 14d | 2025-12-03 | 2025-12-18 | A1120 SS | 0d |
| A1970 |  | Chamber Details Submittal | 14d | 2025-12-03 | 2025-12-18 | A1120 SS | 0d |
|  | APP | **Approvals** |  | 2025-12-20 | 2026-01-01 |  |  |
| A1980 |  | Overall Layout Plan Approval | 12d | 2025-12-20 | 2026-01-01 | A1930 | 0d |
| A1990 |  | Plan & Profiles Approval | 12d | 2025-12-20 | 2026-01-01 | A1940 | 0d |
| A2000 |  | General Typical Plans Approval | 12d | 2025-12-20 | 2026-01-01 | A1950 | 0d |
| A2010 |  | Sewage Tie - In Details Approval | 12d | 2025-12-20 | 2026-01-01 | A1960 | 0d |
| A2020 |  | Chamber Details Approval | 12d | 2025-12-20 | 2026-01-01 | A1970 | 0d |
|  | BC | **Box Culverts** |  | 2025-12-03 | 2026-01-01 |  |  |
|  | SB | **Submittals** |  | 2025-12-03 | 2025-12-18 |  |  |
| A2030 |  | Setting out Layout Submittal | 14d | 2025-12-03 | 2025-12-18 | A1120 SS | 0d |
| A2040 |  | Typical Details Submittal | 14d | 2025-12-03 | 2025-12-18 | A1120 SS | 0d |
| A2050 |  | Concrete Dim.& Reinforcement details Submittal | 14d | 2025-12-03 | 2025-12-18 | A1120 SS | 0d |
|  | APP | **Approvals** |  | 2025-12-20 | 2026-01-01 |  |  |
| A2060 |  | Setting out Layout Approval | 12d | 2025-12-20 | 2026-01-01 | A2030 | 0d |
| A2070 |  | Typical Details Approval | 12d | 2025-12-20 | 2026-01-01 | A2040 | 0d |
| A2080 |  | Concrete Dim.& Reinforcement details Approval | 12d | 2025-12-20 | 2026-01-01 | A2050 | 0d |
|  | PT | **Potable Network Drawings** |  | 2025-12-03 | 2026-01-01 |  |  |
|  | SB | **Submittals** |  | 2025-12-03 | 2025-12-18 |  |  |
| A2090 |  | Overall Layout Plan Submittal | 14d | 2025-12-03 | 2025-12-18 | A1120 SS | 0d |
| A2100 |  | Master Plan Submittal | 14d | 2025-12-03 | 2025-12-18 | A1120 SS | 0d |
| A2110 |  | Water Schedules Submittal | 14d | 2025-12-03 | 2025-12-18 | A1120 SS | 0d |
| A2120 |  | General Typical Plans Submittal | 14d | 2025-12-03 | 2025-12-18 | A1120 SS | 0d |
| A2130 |  | General Typical Details Submittal | 14d | 2025-12-03 | 2025-12-18 | A1120 SS | 0d |
|  | APP | **Approvals** |  | 2025-12-20 | 2026-01-01 |  |  |
| A2140 |  | Overall Layout Plan Approval | 12d | 2025-12-20 | 2026-01-01 | A2090 | 0d |
| A2150 |  | Master Plan Approval | 12d | 2025-12-20 | 2026-01-01 | A2100 | 0d |
| A2160 |  | Water Schedules Approval | 12d | 2025-12-20 | 2026-01-01 | A2110 | 0d |
| A2170 |  | General Typical Plans Approval | 12d | 2025-12-20 | 2026-01-01 | A2120 | 0d |
| A2180 |  | General Typical Details Approval | 12d | 2025-12-20 | 2026-01-01 | A2130 | 0d |
|  | IR | **Irrigation Network Drawings** |  | 2025-12-03 | 2026-01-01 |  |  |
|  | SB | **Submittals** |  | 2025-12-03 | 2025-12-18 |  |  |
| A2190 |  | Overall Layout Plan Submittal | 14d | 2025-12-03 | 2025-12-18 | A1120 SS | 0d |
| A2200 |  | Master Plan Submittal | 14d | 2025-12-03 | 2025-12-18 | A1120 SS | 0d |
| A2210 |  | Water Schedules Submittal | 14d | 2025-12-03 | 2025-12-18 | A1120 SS | 0d |
| A2220 |  | General Typical Plans Submittal | 14d | 2025-12-03 | 2025-12-18 | A1120 SS | 0d |
| A2230 |  | General Typical Details Submittal | 14d | 2025-12-03 | 2025-12-18 | A1120 SS | 0d |
|  | APP | **Approvals** |  | 2025-12-20 | 2026-01-01 |  |  |
| A2240 |  | Overall Layout Plan Approval | 12d | 2025-12-20 | 2026-01-01 | A2190 | 0d |
| A2250 |  | Master Plan Approval | 12d | 2025-12-20 | 2026-01-01 | A2200 | 0d |
| A2260 |  | Water Schedules Approval | 12d | 2025-12-20 | 2026-01-01 | A2210 | 0d |
| A2270 |  | General Typical Plans Approval | 12d | 2025-12-20 | 2026-01-01 | A2220 | 0d |
| A2280 |  | General Typical Details Approval | 12d | 2025-12-20 | 2026-01-01 | A2230 | 0d |
|  | EL | **Electrical Network Drawings** |  | 2025-12-03 | 2026-01-01 |  |  |
|  | 1 | **Medium Voltage** |  | 2025-12-03 | 2026-01-01 |  |  |
|  | SB | **Submittals** |  | 2025-12-03 | 2025-12-18 |  |  |
| A2290 |  | Overall Layout Plan Submittal | 14d | 2025-12-03 | 2025-12-18 | A1120 SS | 0d |
| A2300 |  | Plan & Profile Submittal | 14d | 2025-12-03 | 2025-12-18 | A1120 SS | 0d |
| A2310 |  | Buried trench & Duct Bank Details Submittal | 14d | 2025-12-03 | 2025-12-18 | A1120 SS | 0d |
| A2320 |  | Cable Schedule Details Submittal | 14d | 2025-12-03 | 2025-12-18 | A1120 SS | 0d |
| A2330 |  | Single Line Diagram Submittal | 14d | 2025-12-03 | 2025-12-18 | A1120 SS | 0d |
|  | APP | **Approvals** |  | 2025-12-20 | 2026-01-01 |  |  |
| A2340 |  | Overall Layout Plan Approval | 12d | 2025-12-20 | 2026-01-01 | A2290 | 0d |
| A2350 |  | Plan & Profile Approval | 12d | 2025-12-20 | 2026-01-01 | A2300 | 0d |
| A2360 |  | Buried trench & Duct Bank Details Approval | 12d | 2025-12-20 | 2026-01-01 | A2310 | 0d |
| A2370 |  | Cable Schedule Details Approval | 12d | 2025-12-20 | 2026-01-01 | A2320 | 0d |
| A2380 |  | Single Line Diagram Approval | 12d | 2025-12-20 | 2026-01-01 | A2330 | 0d |
|  | LV | **Low Voltage/ Street Lighting** |  | 2025-12-03 | 2026-01-01 |  |  |
|  | SB | **Submittals** |  | 2025-12-03 | 2025-12-18 |  |  |
| A5150 |  | Overall Layout Plan Submittal | 14d | 2025-12-03 | 2025-12-18 | A1120 SS | 0d |
| A5160 |  | Plan & Profile Submittal | 14d | 2025-12-03 | 2025-12-18 | A1120 SS | 0d |
| A5170 |  | Buried trench & Duct Bank Details Submittal | 14d | 2025-12-03 | 2025-12-18 | A1120 SS | 0d |
| A5180 |  | Cable Schedule Details Submittal | 14d | 2025-12-03 | 2025-12-18 | A1120 SS | 0d |
| A5190 |  | Single Line Diagram Submittal | 14d | 2025-12-03 | 2025-12-18 | A1120 SS | 0d |
|  | APP | **Approvals** |  | 2025-12-20 | 2026-01-01 |  |  |
| A5200 |  | Overall Layout Plan Approval | 12d | 2025-12-20 | 2026-01-01 | A5150 | 0d |
| A5210 |  | Plan & Profile Approval | 12d | 2025-12-20 | 2026-01-01 | A5160 | 0d |

| ID | WBS | Task | Duration | Start | Finish | Predecessors | Total float |
| --- | --- | --- | --- | --- | --- | --- | --- |
| A5220 |  | Buried trench & Duct Bank Details Approval | 12d | 2025-12-20 | 2026-01-01 | A5170 | 0d |
| A5230 |  | Cable Schedule Details Approval | 12d | 2025-12-20 | 2026-01-01 | A5180 | 0d |
| A5240 |  | Single Line Diagram Approval | 12d | 2025-12-20 | 2026-01-01 | A5190 | 0d |
|  | LV1 | **ICT Network** |  | 2025-12-03 | 2026-01-01 |  |  |
|  | SB | **Submittals** |  | 2025-12-03 | 2025-12-18 |  |  |
| A5250 |  | Overall Layout Plan Submittal | 14d | 2025-12-03 | 2025-12-18 | A1120 SS | 0d |
| A5260 |  | Plan & Profile Submittal | 14d | 2025-12-03 | 2025-12-18 | A1120 SS | 0d |
| A5270 |  | Buried trench & Duct Bank Details Submittal | 14d | 2025-12-03 | 2025-12-18 | A1120 SS | 0d |
| A5280 |  | Cable Schedule Details Submittal | 14d | 2025-12-03 | 2025-12-18 | A1120 SS | 0d |
| A5290 |  | Single Line Diagram Submittal | 14d | 2025-12-03 | 2025-12-18 | A1120 SS | 0d |
|  | APP | **Approvals** |  | 2025-12-20 | 2026-01-01 |  |  |
| A5300 |  | Overall Layout Plan Approval | 12d | 2025-12-20 | 2026-01-01 | A5250 | 0d |
| A5310 |  | Plan & Profile Approval | 12d | 2025-12-20 | 2026-01-01 | A5260 | 0d |
| A5320 |  | Buried trench & Duct Bank Details Approval | 12d | 2025-12-20 | 2026-01-01 | A5270 | 0d |
| A5330 |  | Cable Schedule Details Approval | 12d | 2025-12-20 | 2026-01-01 | A5280 | 0d |
| A5340 |  | Single Line Diagram Approval | 12d | 2025-12-20 | 2026-01-01 | A5290 | 0d |
|  | LV11 | **Electrical-Building** |  | 2025-12-03 | 2026-01-01 |  |  |
|  | SB | **Submittals** |  | 2025-12-03 | 2025-12-18 |  |  |
| A5350 |  | Overall Layout Plan Submittal | 14d | 2025-12-03 | 2025-12-18 | A1120 SS | 0d |
| A5360 |  | Plan & Profile Submittal | 14d | 2025-12-03 | 2025-12-18 | A1120 SS | 0d |
| A5370 |  | Buried trench & Duct Bank Details Submittal | 14d | 2025-12-03 | 2025-12-18 | A1120 SS | 0d |
| A5380 |  | Cable Schedule Details Submittal | 14d | 2025-12-03 | 2025-12-18 | A1120 SS | 0d |
| A5390 |  | Single Line Diagram Submittal | 14d | 2025-12-03 | 2025-12-18 | A1120 SS | 0d |
|  | APP | **Approvals** |  | 2025-12-20 | 2026-01-01 |  |  |
| A5400 |  | Overall Layout Plan Approval | 12d | 2025-12-20 | 2026-01-01 | A5350 | 0d |
| A5410 |  | Plan & Profile Approval | 12d | 2025-12-20 | 2026-01-01 | A5360 | 0d |
| A5420 |  | Buried trench & Duct Bank Details Approval | 12d | 2025-12-20 | 2026-01-01 | A5370 | 0d |
| A5430 |  | Cable Schedule Details Approval | 12d | 2025-12-20 | 2026-01-01 | A5380 | 0d |
| A5440 |  | Single Line Diagram Approval | 12d | 2025-12-20 | 2026-01-01 | A5390 | 0d |
|  | RD | **Road Works Drawings** |  | 2025-12-03 | 2026-01-01 |  |  |
|  | SB | **Submittals** |  | 2025-12-03 | 2025-12-18 |  |  |
| A2390 |  | Alignment & Setting Out Submittal | 14d | 2025-12-03 | 2025-12-18 | A1120 SS | 0d |
| A2400 |  | Plan and Profile Submittal | 14d | 2025-12-03 | 2025-12-18 | A1120 SS | 0d |
| A2410 |  | Typical Cross Sections Submittal | 14d | 2025-12-03 | 2025-12-18 | A1120 SS | 0d |
| A2420 |  | Cross Sections Details Submittal | 14d | 2025-12-03 | 2025-12-18 | A1120 SS | 0d |
| A2430 |  | Finish Grading Submittal | 14d | 2025-12-03 | 2025-12-18 | A1120 SS | 0d |
| A2490 |  | Road Signing & Marking Roads Submittal | 14d | 2025-12-03 | 2025-12-18 | A1120 SS | 0d |
|  | APP | **Approvals** |  | 2025-12-20 | 2026-01-01 |  |  |
| A2440 |  | Alignment & Setting Out Approval | 12d | 2025-12-20 | 2026-01-01 | A2390 | 0d |
| A2450 |  | Plan & Profile Approval | 12d | 2025-12-20 | 2026-01-01 | A2400 | 0d |
| A2460 |  | Typical Cross Sections Approval | 12d | 2025-12-20 | 2026-01-01 | A2410 | 0d |
| A2470 |  | Cross Sections Details Approval | 12d | 2025-12-20 | 2026-01-01 | A2420 | 0d |
| A2480 |  | Finish Grading Approval | 12d | 2025-12-20 | 2026-01-01 | A2430 | 0d |
| A2500 |  | Road Signing & Marking Roads Approval | 12d | 2025-12-20 | 2026-01-01 | A2490 | 0d |
|  | LS | **Landscape Works Drawings** |  | 2025-12-03 | 2026-01-01 |  |  |
|  | SB | **Submittals** |  | 2025-12-03 | 2025-12-18 |  |  |
| A2510 |  | Hardscape Plans Landscape Submittal | 14d | 2025-12-03 | 2025-12-18 | A1120 SS | 0d |
| A2520 |  | Softscape Plans Landscape Submittal | 14d | 2025-12-03 | 2025-12-18 | A1120 SS | 0d |
| A2530 |  | Details Plans Landscape Submittal | 14d | 2025-12-03 | 2025-12-18 | A1120 SS | 0d |
| A2540 |  | Schedules Plans Landscape Submittal | 14d | 2025-12-03 | 2025-12-18 | A1120 SS | 0d |
| A2550 |  | Lighting Plans Landscape Submittal | 14d | 2025-12-03 | 2025-12-18 | A1120 SS | 0d |
|  | APP | **Approvals** |  | 2025-12-20 | 2026-01-01 |  |  |
| A2560 |  | Hardscape Plans Landscape Approval | 12d | 2025-12-20 | 2026-01-01 | A2510 | 0d |
| A2570 |  | Softscape Plans Landscape Approval | 12d | 2025-12-20 | 2026-01-01 | A2520 | 0d |
| A2580 |  | Details Plans Landscape Approval | 12d | 2025-12-20 | 2026-01-01 | A2530 | 0d |
| A2590 |  | Schedules Plans Landscape Approval | 12d | 2025-12-20 | 2026-01-01 | A2540 | 0d |
| A2600 |  | Lighting Plans Landscape Approval | 12d | 2025-12-20 | 2026-01-01 | A2550 | 0d |
|  | ZN3 | **Labor Camp** |  | 2025-12-03 | 2026-01-01 |  |  |
|  | EW | **Earth Work** |  | 2025-12-03 | 2026-01-01 |  |  |
|  | SB | **Submittals** |  | 2025-12-03 | 2025-12-18 |  |  |
| A2610 |  | NGL Submittal | 14d | 2025-12-03 | 2025-12-18 | A1120 SS | 0d |
|  | APP | **Approvals** |  | 2025-12-20 | 2026-01-01 |  |  |
| A2620 |  | NGL Approval | 12d | 2025-12-20 | 2026-01-01 | A2610 | 0d |
|  | RD | **Road Works Drawings** |  | 2025-12-03 | 2026-01-01 |  |  |
|  | SB | **Submittals** |  | 2025-12-03 | 2025-12-18 |  |  |
| A2630 |  | Alignment & Setting Out Submittal | 14d | 2025-12-03 | 2025-12-18 | A1120 SS | 0d |
| A2640 |  | Plan and Profile Submittal | 14d | 2025-12-03 | 2025-12-18 | A1120 SS | 0d |
| A2650 |  | Typical Cross Sections Submittal | 14d | 2025-12-03 | 2025-12-18 | A1120 SS | 0d |
| A2660 |  | Cross Sections Details Submittal | 14d | 2025-12-03 | 2025-12-18 | A1120 SS | 0d |
| A2670 |  | Finish Grading Submittal | 14d | 2025-12-03 | 2025-12-18 | A1120 SS | 0d |

| ID | WBS | Task | Duration | Start | Finish | Predecessors | Total float |
| --- | --- | --- | --- | --- | --- | --- | --- |
| A2730 |  | Road Signing & Marking Roads Submittal | 14d | 2025-12-03 | 2025-12-18 | A1120 SS | 0d |
|  | APP | **Approvals** |  | 2025-12-20 | 2026-01-01 |  |  |
| A2680 |  | Alignment & Setting Out Approval | 12d | 2025-12-20 | 2026-01-01 | A2630 | 0d |
| A2690 |  | Plan & Profile Approval | 12d | 2025-12-20 | 2026-01-01 | A2640 | 0d |
| A2700 |  | Typical Cross Sections Approval | 12d | 2025-12-20 | 2026-01-01 | A2650 | 0d |
| A2710 |  | Cross Sections Details Approval | 12d | 2025-12-20 | 2026-01-01 | A2660 | 0d |
| A2720 |  | Finish Grading Approval | 12d | 2025-12-20 | 2026-01-01 | A2670 | 0d |
| A2740 |  | Road Signing & Marking Roads Approval | 12d | 2025-12-20 | 2026-01-01 | A2730 | 0d |
|  | ZN4 | **Mosque** |  | 2025-12-03 | 2026-01-01 |  |  |
|  | EW | **Earth Work** |  | 2025-12-03 | 2026-01-01 |  |  |
|  | SB | **Submittals** |  | 2025-12-03 | 2025-12-18 |  |  |
| A2750 |  | NGL Submittal | 14d | 2025-12-03 | 2025-12-18 | A1120 SS | 0d |
|  | APP | **Approvals** |  | 2025-12-20 | 2026-01-01 |  |  |
| A2760 |  | NGL Approval | 12d | 2025-12-20 | 2026-01-01 | A2750 | 0d |
|  | SC | **Structural Work Drawings** |  | 2025-12-03 | 2026-01-01 |  |  |
|  | SB | **Submittals** |  | 2025-12-03 | 2025-12-18 |  |  |
| A2770 |  | Wet Utilities Drawings Submittal | 14d | 2025-12-03 | 2025-12-18 | A1120 SS | 0d |
| A2780 |  | Dry Utilities Drawings Submittal | 14d | 2025-12-03 | 2025-12-18 | A1120 SS | 0d |
| A2790 |  | Civil Works Drawings Submittal | 14d | 2025-12-03 | 2025-12-18 | A1120 SS | 0d |
| A2800 |  | Arch. Works Drawings Submittal | 14d | 2025-12-03 | 2025-12-18 | A1120 SS | 0d |
| A2810 |  | MEP Works Drawings Submittal | 14d | 2025-12-03 | 2025-12-18 | A1120 SS | 0d |
|  | APP | **Approvals** |  | 2025-12-20 | 2026-01-01 |  |  |
| A2820 |  | Wet Utilities Drawings Approval | 12d | 2025-12-20 | 2026-01-01 | A2770 | 0d |
| A2830 |  | Dry Utilities Drawings Approval | 12d | 2025-12-20 | 2026-01-01 | A2780 | 0d |
| A2840 |  | Civil Works Drawings Approvalal | 12d | 2025-12-20 | 2026-01-01 | A2790 | 0d |
| A2850 |  | Arch. Works Drawings Approval | 12d | 2025-12-20 | 2026-01-01 | A2800 | 0d |
| A2860 |  | MEP Works Drawings Approval | 12d | 2025-12-20 | 2026-01-01 | A2810 | 0d |
|  | 1 | **Portable Capins** |  | 2025-12-03 | 2026-01-01 |  |  |
|  | 1 | **Submittals** |  | 2025-12-03 | 2025-12-18 |  |  |
| A93260 |  | Drawings Submittal | 14d | 2025-12-03 | 2025-12-18 | A1120 SS | 356d |
|  | 2 | **Approvals** |  | 2025-12-20 | 2026-01-01 |  |  |
| A93270 |  | Drawings Approvals | 12d | 2025-12-20 | 2026-01-01 | A93260 | 356d |
|  | MTS | **MATERIAL SUBMITAL** |  | 2025-12-03 | 2025-12-18 |  |  |
|  | CVA | **CIVIL & ARCHITECTURE** |  | 2025-12-03 | 2025-12-18 |  |  |
| A7220 |  | Sewer Manholes | 14d | 2025-12-03 | 2025-12-18 | A1120 SS | 1d |
| A7230 |  | Storm Manholes | 14d | 2025-12-03 | 2025-12-18 | A1120 SS | 0d |
| A7240 |  | Telecome Manholes | 14d | 2025-12-03 | 2025-12-18 | A1120 SS | 141d |
| A7250 |  | Lighting Poles Precast Foundation & Bolt | 14d | 2025-12-03 | 2025-12-18 | A1120 SS | 371d |
| A7260 |  | Concrete curb | 14d | 2025-12-03 | 2025-12-18 | A1120 SS | 335d |
| A7270 |  | Aggregate Sub-Grade & Basecourse | 14d | 2025-12-03 | 2025-12-18 | A1120 SS | 0d |
| A7280 |  | Asphalt | 14d | 2025-12-03 | 2025-12-18 | A1120 SS | 0d |
| A7290 |  | Traffic signage | 14d | 2025-12-03 | 2025-12-18 | A1120 SS | 57d |
| A7300 |  | Plant and trees | 14d | 2025-12-03 | 2025-12-18 | A1120 SS | 441d |
| A7310 |  | Garbage Bin, trash & litter | 14d | 2025-12-03 | 2025-12-18 | A1120 SS | 511d |
| A7320 |  | Paving blocks 200*100*60 mm | 14d | 2025-12-03 | 2025-12-18 | A1120 SS | 335d |
| A7330 |  | Blocks & Accessories | 14d | 2025-12-03 | 2025-12-18 | A1120 SS | 387d |
| A7340 |  | Access ladder | 14d | 2025-12-03 | 2025-12-18 | A1120 SS | 336d |
| A7350 |  | Stanless steel Handril | 14d | 2025-12-03 | 2025-12-18 | A1120 SS | 366d |
| A7360 |  | Ductile iron steel cover | 14d | 2025-12-03 | 2025-12-18 | A1120 SS | 335d |
| A7370 |  | Structural steel | 14d | 2025-12-03 | 2025-12-18 | A1120 SS | 244d |
| A7380 |  | Waterproofing Work | 14d | 2025-12-03 | 2025-12-18 | A1120 SS | 341d |
| A7390 |  | Waterproofing membrane | 14d | 2025-12-03 | 2025-12-18 | A1120 SS | 341d |
| A7400 |  | Doors - (Glass & Sliding) | 14d | 2025-12-03 | 2025-12-18 | A1120 SS | 356d |
| A7410 |  | Windows | 14d | 2025-12-03 | 2025-12-18 | A1120 SS | 356d |
| A7420 |  | Paints & Epoxy | 14d | 2025-12-03 | 2025-12-18 | A1120 SS | 364d |
| A7430 |  | Granite, ceramic | 14d | 2025-12-03 | 2025-12-18 | A1120 SS | 349d |
| A7440 |  | Terrazzo tiles | 14d | 2025-12-03 | 2025-12-18 | A1120 SS | 349d |
| A7450 |  | Fall ceiling | 14d | 2025-12-03 | 2025-12-18 | A1120 SS | 350d |
| A7460 |  | Safety Bollards | 14d | 2025-12-03 | 2025-12-18 | A1120 SS | 336d |
| A7470 |  | Geotextile Membrane | 14d | 2025-12-03 | 2025-12-18 | A1120 SS | 341d |
| A7480 |  | Curbstone | 14d | 2025-12-03 | 2025-12-18 | A1120 SS | 426d |
| A7490 |  | Sidewalk interlock/Concrete Pavers | 14d | 2025-12-03 | 2025-12-18 | A1120 SS | 222d |
| A7500 |  | Trees and Bushes-Landscape ( soft) | 14d | 2025-12-03 | 2025-12-18 | A1120 SS | 386d |
| A7510 |  | Concrete Masonry Blocks | 14d | 2025-12-03 | 2025-12-18 | A1120 SS | 378d |
| A7520 |  | Block work Accessories | 14d | 2025-12-03 | 2025-12-18 | A1120 SS | 378d |
| A7530 |  | Plaster to receive tile finish | 14d | 2025-12-03 | 2025-12-18 | A1120 SS | 188d |
| A7540 |  | Paint for External Areas | 14d | 2025-12-03 | 2025-12-18 | A1120 SS | 243d |
| A7550 |  | Paint for Internal Areas | 14d | 2025-12-03 | 2025-12-18 | A1120 SS | 323d |
| A7560 |  | Concrete repair & Curing material | 14d | 2025-12-03 | 2025-12-18 | A1120 SS | 403d |
| A7570 |  | Bonding agent | 14d | 2025-12-03 | 2025-12-18 | A1120 SS | 426d |

| ID | WBS | Task | Duration | Start | Finish | Predecessors | Total float |
| --- | --- | --- | --- | --- | --- | --- | --- |
| A7580 |  | Concrete Mix for PC works | 14d | 2025-12-03 | 2025-12-18 | A1120 SS | 186d |
| A7590 |  | Concrete Mix for RC works | 14d | 2025-12-03 | 2025-12-18 | A1120 SS | 200d |
| A7600 |  | Reinforcement Steel | 14d | 2025-12-03 | 2025-12-18 | A1120 SS | 214d |
| A7610 |  | Sand Cement Plaster for Internal Walls | 14d | 2025-12-03 | 2025-12-18 | A1120 SS | 88d |
| A7620 |  | Sand Cement Plaster for External Walls | 14d | 2025-12-03 | 2025-12-18 | A1120 SS | 381d |
| A7630 |  | Porcelain Tiling | 14d | 2025-12-03 | 2025-12-18 | A1120 SS | 349d |
| A7640 |  | False Ceilings | 14d | 2025-12-03 | 2025-12-18 | A1120 SS | 350d |
| A7650 |  | Carpet Flooring | 14d | 2025-12-03 | 2025-12-18 | A1120 SS | 384d |
| A7660 |  | Landscape (Hard ) | 14d | 2025-12-03 | 2025-12-18 | A1120 SS | 102d |
|  | ELE | **ELECTRICAL** |  | 2025-12-03 | 2025-12-18 |  |  |
| A7680 |  | Public address System | 14d | 2025-12-03 | 2025-12-18 | A1120 SS | 431d |
| A7690 |  | Fire Pump | 14d | 2025-12-03 | 2025-12-18 | A1120 SS | 401d |
| A7700 |  | Unit Substation & RMU | 14d | 2025-12-03 | 2025-12-18 | A1120 SS | 70d |
| A7710 |  | MV Cables | 14d | 2025-12-03 | 2025-12-18 | A1120 SS | 0d |
| A7720 |  | LV Cables | 14d | 2025-12-03 | 2025-12-18 | A1120 SS | 341d |
| A7730 |  | LV Wire | 14d | 2025-12-03 | 2025-12-18 | A1120 SS | 372d |
| A7740 |  | Electrical Panels | 14d | 2025-12-03 | 2025-12-18 | A1120 SS | 384d |
| A7750 |  | LV Conductors (part of the panels) | 14d | 2025-12-03 | 2025-12-18 | A1120 SS | 372d |
| A7760 |  | Underground Ducts-UPVC | 14d | 2025-12-03 | 2025-12-18 | A1120 SS | 17d |
| A7770 |  | Underground Ducts-HDPE | 14d | 2025-12-03 | 2025-12-18 | A1120 SS | 354d |
| A7780 |  | External Lighting Fixtures | 14d | 2025-12-03 | 2025-12-18 | A1120 SS | 426d |
| A7790 |  | Street Lights Lighting Fixtures | 14d | 2025-12-03 | 2025-12-18 | A1120 SS | 444d |
| A7800 |  | Street Lighting Poles | 14d | 2025-12-03 | 2025-12-18 | A1120 SS | 444d |
| A7810 |  | PVC & EMT conduits | 14d | 2025-12-03 | 2025-12-18 | A1120 SS | 331d |
| A7820 |  | LIGHTING FIXTURES (buildings Internal) | 14d | 2025-12-03 | 2025-12-18 | A1120 SS | 445d |
| A7830 |  | Wiring Devices and Switches | 14d | 2025-12-03 | 2025-12-18 | A1120 SS | 445d |
| A7840 |  | DALI Cabinet (external lighting control) | 14d | 2025-12-03 | 2025-12-18 | A1120 SS | 445d |
| A7850 |  | Earthing System | 14d | 2025-12-03 | 2025-12-18 | A1120 SS | 445d |
| A7870 |  | GI duct work with insulation & Support | 14d | 2025-12-03 | 2025-12-18 | A1120 SS | 369d |
| A7880 |  | Drain & Clean Out | 14d | 2025-12-03 | 2025-12-18 | A1120 SS | 394d |
| A7890 |  | Split AC Package | 14d | 2025-12-03 | 2025-12-18 | A1120 SS | 378d |
| A7900 |  | Ventilation Unit-Fan | 14d | 2025-12-03 | 2025-12-18 | A1120 SS | 378d |
| A7910 |  | Cable glands, lugs and accessories | 14d | 2025-12-03 | 2025-12-18 | A1120 SS | 457d |
|  | MECH | **MECHANICAL** |  | 2025-12-03 | 2025-12-18 |  |  |
| A7920 |  | Secondary Irrigation System | 14d | 2025-12-03 | 2025-12-18 | A1120 SS | 193d |
| A7930 |  | HDPE Pipes & Fittings | 14d | 2025-12-03 | 2025-12-18 | A1120 SS | 44d |
| A7940 |  | UPVC Pipes & Fittings | 14d | 2025-12-03 | 2025-12-18 | A1120 SS | 183d |
| A7950 |  | GRP Pipes & Fittings | 14d | 2025-12-03 | 2025-12-18 | A1120 SS | 107d |
| A7960 |  | Sanitory Ware, Plumbing Fixtures, Toilet Accessories | 14d | 2025-12-03 | 2025-12-18 | A1120 SS | 362d |
| A7970 |  | Water Tank | 14d | 2025-12-03 | 2025-12-18 | A1120 SS | 451d |
| A7980 |  | Gate Valves | 14d | 2025-12-03 | 2025-12-18 | A1120 SS | 4d |
| A7990 |  | Surface Box for Gate valve | 14d | 2025-12-03 | 2025-12-18 | A1120 SS | 74d |
| A8000 |  | Air Release Valves | 14d | 2025-12-03 | 2025-12-18 | A1120 SS | 134d |
| A8010 |  | Washout Valves | 14d | 2025-12-03 | 2025-12-18 | A1120 SS | 214d |
| A8020 |  | Connection Chamber | 14d | 2025-12-03 | 2025-12-18 | A1120 SS | 188d |
| A8030 |  | HDPE House Connections Chambers | 14d | 2025-12-03 | 2025-12-18 | A1120 SS | 103d |
| A8040 |  | Hose Bib | 14d | 2025-12-03 | 2025-12-18 | A1120 SS | 74d |
| A8050 |  | PPR Pipes & Fittings | 14d | 2025-12-03 | 2025-12-18 | A1120 SS | 144d |
| A8060 |  | Water Hammer Arrestor & TMV | 14d | 2025-12-03 | 2025-12-18 | A1120 SS | 444d |
| A8070 |  | Sewage Manholes Cover with frame | 14d | 2025-12-03 | 2025-12-18 | A1120 SS | 63d |
| A8080 |  | Irrigation Manholes Cover with frame | 14d | 2025-12-03 | 2025-12-18 | A1120 SS | 133d |
| A8090 |  | Potable Manholes Cover with frame | 14d | 2025-12-03 | 2025-12-18 | A1120 SS | 189d |
| A8100 |  | ICT Manholes Cover with frame | 14d | 2025-12-03 | 2025-12-18 | A1120 SS | 245d |
| A8110 |  | Polyethylene Sheets | 14d | 2025-12-03 | 2025-12-18 | A1120 SS | 21d |
| A8120 |  | Warning Tape | 14d | 2025-12-03 | 2025-12-18 | A1120 SS | 83d |
| A8130 |  | Bitumen Paint (Bituminous Damp proofing) | 14d | 2025-12-03 | 2025-12-18 | A1120 SS | 431d |
| A8140 |  | Anti Termite & Pest Contro; | 14d | 2025-12-03 | 2025-12-18 | A1120 SS | 306d |
| A8150 |  | Warning tape | 14d | 2025-12-03 | 2025-12-18 | A1120 SS | 68d |
| A8160 |  | Fire Hydrants | 14d | 2025-12-03 | 2025-12-18 | A1120 SS | 189d |
| A8170 |  | OS & Y Gate valve | 14d | 2025-12-03 | 2025-12-18 | A1120 SS | 264d |
| A8180 |  | Fire Extinguisher | 14d | 2025-12-03 | 2025-12-18 | A1120 SS | 102d |
| A8190 |  | Fire Alarm systems & cable | 14d | 2025-12-03 | 2025-12-18 | A1120 SS | 172d |
| A8200 |  | Water Heater | 14d | 2025-12-03 | 2025-12-18 | A1120 SS | 374d |
| A8210 |  | Termination Kits | 14d | 2025-12-03 | 2025-12-18 | A1120 SS | 454d |
|  | MTA | **MATERIAL APPROVAL** |  | 2025-12-20 | 2026-01-04 |  |  |
|  | CVA | **CIVIL & ARCHITECTURE** |  | 2025-12-20 | 2026-01-04 |  |  |
| A8220 |  | Sewer Manholes | 14d | 2025-12-20 | 2026-01-04 | A7220 | 1d |
| A8230 |  | Storm Manholes | 14d | 2025-12-20 | 2026-01-04 | A7230 | 0d |
| A8240 |  | Telecome Manholes | 14d | 2025-12-20 | 2026-01-04 | A7240 | 141d |
| A8250 |  | Lighting Poles Precast Foundation & Bolt | 14d | 2025-12-20 | 2026-01-04 | A7250 | 371d |

| ID | WBS | Task | Duration | Start | Finish | Predecessors | Total float |
| --- | --- | --- | --- | --- | --- | --- | --- |
| A8260 |  | Concrete curb | 14d | 2025-12-20 | 2026-01-04 | A7260 | 335d |
| A8270 |  | Aggregate Sub-Grade & Basecourse | 14d | 2025-12-20 | 2026-01-04 | A7270 | 0d |
| A8280 |  | Asphalt | 14d | 2025-12-20 | 2026-01-04 | A7280 | 0d |
| A8290 |  | Traffic signage | 14d | 2025-12-20 | 2026-01-04 | A7290 | 57d |
| A8300 |  | Plant and trees | 14d | 2025-12-20 | 2026-01-04 | A7300 | 441d |
| A8310 |  | Garbage Bin, trash & litter | 14d | 2025-12-20 | 2026-01-04 | A7310 | 511d |
| A8320 |  | Paving blocks 200*100*60 mm | 14d | 2025-12-20 | 2026-01-04 | A7320 | 335d |
| A8330 |  | Blocks & Accessories | 14d | 2025-12-20 | 2026-01-04 | A7330 | 387d |
| A8340 |  | Access ladder | 14d | 2025-12-20 | 2026-01-04 | A7340 | 336d |
| A8350 |  | Stanless steel Handril | 14d | 2025-12-20 | 2026-01-04 | A7350 | 366d |
| A8360 |  | Ductile iron steel cover | 14d | 2025-12-20 | 2026-01-04 | A7360 | 335d |
| A8370 |  | Structural steel | 14d | 2025-12-20 | 2026-01-04 | A7370 | 244d |
| A8380 |  | Waterproofing Work | 14d | 2025-12-20 | 2026-01-04 | A7380 | 341d |
| A8390 |  | Waterproofing membrane | 14d | 2025-12-20 | 2026-01-04 | A7390 | 341d |
| A8400 |  | Doors - (Glass & Sliding) | 14d | 2025-12-20 | 2026-01-04 | A7400 | 356d |
| A8410 |  | Windows | 14d | 2025-12-20 | 2026-01-04 | A7410 | 356d |
| A8420 |  | Paints & Epoxy | 14d | 2025-12-20 | 2026-01-04 | A7420 | 364d |
| A8430 |  | Granite, ceramic | 14d | 2025-12-20 | 2026-01-04 | A7430 | 349d |
| A8440 |  | Terrazzo tiles | 14d | 2025-12-20 | 2026-01-04 | A7440 | 349d |
| A8450 |  | Fall ceiling | 14d | 2025-12-20 | 2026-01-04 | A7450 | 350d |
| A8460 |  | Safety Bollards | 14d | 2025-12-20 | 2026-01-04 | A7460 | 336d |
| A8470 |  | Geotextile Membrane | 14d | 2025-12-20 | 2026-01-04 | A7470 | 341d |
| A8480 |  | Curbstone | 14d | 2025-12-20 | 2026-01-04 | A7480 | 426d |
| A8490 |  | Sidewalk interlock/Concrete Pavers | 14d | 2025-12-20 | 2026-01-04 | A7490 | 222d |
| A8500 |  | Trees and Bushes-Landscape ( soft) | 14d | 2025-12-20 | 2026-01-04 | A7500 | 386d |
| A8510 |  | Concrete Masonry Blocks | 14d | 2025-12-20 | 2026-01-04 | A7510 | 378d |
| A8520 |  | Block work Accessories | 14d | 2025-12-20 | 2026-01-04 | A7520 | 378d |
| A8530 |  | Plaster to receive tile finish | 14d | 2025-12-20 | 2026-01-04 | A7530 | 188d |
| A8540 |  | Paint for External Areas | 14d | 2025-12-20 | 2026-01-04 | A7540 | 243d |
| A8550 |  | Paint for Internal Areas | 14d | 2025-12-20 | 2026-01-04 | A7550 | 323d |
| A8560 |  | Concrete repair & Curing material | 14d | 2025-12-20 | 2026-01-04 | A7560 | 403d |
| A8570 |  | Bonding agent | 14d | 2025-12-20 | 2026-01-04 | A7570 | 426d |
| A8580 |  | Concrete Mix for PC works | 14d | 2025-12-20 | 2026-01-04 | A7580 | 186d |
| A8590 |  | Concrete Mix for RC works | 14d | 2025-12-20 | 2026-01-04 | A7590 | 200d |
| A8600 |  | Reinforcement Steel | 14d | 2025-12-20 | 2026-01-04 | A7600 | 214d |
| A8610 |  | Sand Cement Plaster for Internal Walls | 14d | 2025-12-20 | 2026-01-04 | A7610 | 88d |
| A8620 |  | Sand Cement Plaster for External Walls | 14d | 2025-12-20 | 2026-01-04 | A7620 | 381d |
| A8630 |  | Porcelain Tiling | 14d | 2025-12-20 | 2026-01-04 | A7630 | 349d |
| A8640 |  | False Ceilings | 14d | 2025-12-20 | 2026-01-04 | A7640 | 350d |
| A8650 |  | Carpet Flooring | 14d | 2025-12-20 | 2026-01-04 | A7650 | 384d |
| A8660 |  | Landscape (Hard ) | 14d | 2025-12-20 | 2026-01-04 | A7660 | 102d |
|  | ELE | **ELECTRICAL** |  | 2025-12-20 | 2026-01-04 |  |  |
| A8680 |  | Public address System | 14d | 2025-12-20 | 2026-01-04 | A7680 | 431d |
| A8690 |  | Fire Pump | 14d | 2025-12-20 | 2026-01-04 | A7690 | 401d |
| A8700 |  | Unit Substation & RMU | 14d | 2025-12-20 | 2026-01-04 | A7700 | 70d |
| A8710 |  | MV Cables | 14d | 2025-12-20 | 2026-01-04 | A7710 | 0d |
| A8720 |  | LV Cables | 14d | 2025-12-20 | 2026-01-04 | A7720 | 341d |
| A8730 |  | LV Wire | 14d | 2025-12-20 | 2026-01-04 | A7730 | 372d |
| A8740 |  | Electrical Panels | 14d | 2025-12-20 | 2026-01-04 | A7740 | 384d |
| A8750 |  | LV Conductors (part of the panels) | 14d | 2025-12-20 | 2026-01-04 | A7750 | 372d |
| A8760 |  | Underground Ducts-UPVC | 14d | 2025-12-20 | 2026-01-04 | A7760 | 17d |
| A8770 |  | Underground Ducts-HDPE | 14d | 2025-12-20 | 2026-01-04 | A7770 | 354d |
| A8780 |  | External Lighting Fixtures | 14d | 2025-12-20 | 2026-01-04 | A7780 | 426d |
| A8790 |  | Street Lights Lighting Fixtures | 14d | 2025-12-20 | 2026-01-04 | A7790 | 444d |
| A8800 |  | Street Lighting Poles | 14d | 2025-12-20 | 2026-01-04 | A7800 | 444d |
| A8810 |  | PVC & EMT conduits | 14d | 2025-12-20 | 2026-01-04 | A7810 | 331d |
| A8820 |  | LIGHTING FIXTURES (buildings Internal) | 14d | 2025-12-20 | 2026-01-04 | A7820 | 445d |
| A8830 |  | Wiring Devices and Switches | 14d | 2025-12-20 | 2026-01-04 | A7830 | 445d |
| A8840 |  | DALI Cabinet (external lighting control) | 14d | 2025-12-20 | 2026-01-04 | A7840 | 445d |
| A8850 |  | Earthing System | 14d | 2025-12-20 | 2026-01-04 | A7850 | 445d |
| A8870 |  | GI duct work with insulation & Support | 14d | 2025-12-20 | 2026-01-04 | A7870 | 369d |
| A8880 |  | Drain & Clean Out | 14d | 2025-12-20 | 2026-01-04 | A7880 | 394d |
| A8890 |  | Split AC Package | 14d | 2025-12-20 | 2026-01-04 | A7890 | 378d |
| A8900 |  | Ventilation Unit-Fan | 14d | 2025-12-20 | 2026-01-04 | A7900 | 378d |
| A8910 |  | Cable glands, lugs and accessories | 14d | 2025-12-20 | 2026-01-04 | A7910 | 457d |
|  | MECH | **MECHANICAL** |  | 2025-12-20 | 2026-01-04 |  |  |
| A8920 |  | Secondary Irrigation System | 14d | 2025-12-20 | 2026-01-04 | A7920 | 193d |
| A8930 |  | HDPE Pipes & Fittings | 14d | 2025-12-20 | 2026-01-04 | A7930 | 44d |
| A8940 |  | UPVC Pipes & Fittings | 14d | 2025-12-20 | 2026-01-04 | A7940 | 183d |
| A8950 |  | GRP Pipes & Fittings | 14d | 2025-12-20 | 2026-01-04 | A7950 | 107d |

| ID | WBS | Task | Duration | Start | Finish | Predecessors | Total float |
| --- | --- | --- | --- | --- | --- | --- | --- |
| A8960 |  | Sanitory Ware, Plumbing Fixtures, Toilet Accessories | 14d | 2025-12-20 | 2026-01-04 | A7960 | 362d |
| A8970 |  | Water Tank | 14d | 2025-12-20 | 2026-01-04 | A7970 | 451d |
| A8980 |  | Gate Valves | 14d | 2025-12-20 | 2026-01-04 | A7980 | 4d |
| A8990 |  | Surface Box for Gate valve | 14d | 2025-12-20 | 2026-01-04 | A7990 | 74d |
| A9000 |  | Air Release Valves | 14d | 2025-12-20 | 2026-01-04 | A8000 | 134d |
| A9010 |  | Washout Valves | 14d | 2025-12-20 | 2026-01-04 | A8010 | 214d |
| A9020 |  | Connection Chamber | 14d | 2025-12-20 | 2026-01-04 | A8020 | 188d |
| A9030 |  | HDPE House Connections Chambers | 14d | 2025-12-20 | 2026-01-04 | A8030 | 103d |
| A9040 |  | Hose Bib | 14d | 2025-12-20 | 2026-01-04 | A8040 | 74d |
| A9050 |  | PPR Pipes & Fittings | 14d | 2025-12-20 | 2026-01-04 | A8050 | 144d |
| A9060 |  | Water Hammer Arrestor & TMV | 14d | 2025-12-20 | 2026-01-04 | A8060 | 444d |
| A9070 |  | Sewage Manholes Cover with frame | 14d | 2025-12-20 | 2026-01-04 | A8070 | 63d |
| A9080 |  | Irrigation Manholes Cover with frame | 14d | 2025-12-20 | 2026-01-04 | A8080 | 133d |
| A9090 |  | Potable Manholes Cover with frame | 14d | 2025-12-20 | 2026-01-04 | A8090 | 189d |
| A9100 |  | ICT Manholes Cover with frame | 14d | 2025-12-20 | 2026-01-04 | A8100 | 245d |
| A9110 |  | Polyethylene Sheets | 14d | 2025-12-20 | 2026-01-04 | A8110 | 21d |
| A9120 |  | Warning Tape | 14d | 2025-12-20 | 2026-01-04 | A8120 | 83d |
| A9130 |  | Bitumen Paint (Bituminous Damp proofing) | 14d | 2025-12-20 | 2026-01-04 | A8130 | 431d |
| A9140 |  | Anti Termite & Pest Contro; | 14d | 2025-12-20 | 2026-01-04 | A8140 | 306d |
| A9150 |  | Warning tape | 14d | 2025-12-20 | 2026-01-04 | A8150 | 68d |
| A9160 |  | Fire Hydrants | 14d | 2025-12-20 | 2026-01-04 | A8160 | 189d |
| A9170 |  | OS & Y Gate valve | 14d | 2025-12-20 | 2026-01-04 | A8170 | 264d |
| A9180 |  | Fire Extinguisher | 14d | 2025-12-20 | 2026-01-04 | A8180 | 102d |
| A9190 |  | Fire Alarm systems & cable | 14d | 2025-12-20 | 2026-01-04 | A8190 | 172d |
| A9200 |  | Water Heater | 14d | 2025-12-20 | 2026-01-04 | A8200 | 374d |
| A9210 |  | Termination Kits | 14d | 2025-12-20 | 2026-01-04 | A8210 | 454d |
|  | PRO | **PROCUREMENT** |  | 2026-01-05 | 2027-11-03 |  |  |
|  | PO | **PURCHASE ORDER "PO"** |  | 2026-01-05 | 2026-01-28 |  |  |
|  | CVA | **CIVIL & ARCHITECTURE** |  | 2026-01-05 | 2026-01-15 |  |  |
| A9230 |  | Sewer Manholes | 10d | 2026-01-05 | 2026-01-15 | A8220 | 1d |
| A9240 |  | Storm Manholes | 10d | 2026-01-05 | 2026-01-15 | A8230 | 0d |
| A9250 |  | Telecome Manholes | 10d | 2026-01-05 | 2026-01-15 | A8240 | 141d |
| A9260 |  | Lighting Poles Precast Foundation & Bolt | 10d | 2026-01-05 | 2026-01-15 | A8250 | 371d |
| A9270 |  | Concrete curb | 10d | 2026-01-05 | 2026-01-15 | A8260 | 335d |
| A9280 |  | Aggregate Sub-Grade & Basecourse | 10d | 2026-01-05 | 2026-01-15 | A8270 | 0d |
| A9290 |  | Asphalt | 10d | 2026-01-05 | 2026-01-15 | A8280 | 0d |
| A9300 |  | Traffic signage | 10d | 2026-01-05 | 2026-01-15 | A8290 | 57d |
| A9310 |  | Plant and trees | 10d | 2026-01-05 | 2026-01-15 | A8300 | 441d |
| A9320 |  | Garbage Bin, trash & litter | 10d | 2026-01-05 | 2026-01-15 | A8310 | 511d |
| A9330 |  | Paving blocks 200*100*60 mm | 10d | 2026-01-05 | 2026-01-15 | A8320 | 335d |
| A9340 |  | Blocks & Accessories | 10d | 2026-01-05 | 2026-01-15 | A8330 | 387d |
| A9350 |  | Access ladder | 10d | 2026-01-05 | 2026-01-15 | A8340 | 336d |
| A9360 |  | Stanless steel Handril | 10d | 2026-01-05 | 2026-01-15 | A8350 | 366d |
| A9370 |  | Ductile iron steel cover | 10d | 2026-01-05 | 2026-01-15 | A8360 | 335d |
| A9380 |  | Structural steel | 10d | 2026-01-05 | 2026-01-15 | A8370 | 244d |
| A9390 |  | Waterproofing Work | 10d | 2026-01-05 | 2026-01-15 | A8380 | 341d |
| A9400 |  | Waterproofing membrane | 10d | 2026-01-05 | 2026-01-15 | A8390 | 341d |
| A9410 |  | Doors - (Glass & Sliding) | 10d | 2026-01-05 | 2026-01-15 | A8400 | 356d |
| A9420 |  | Windows | 10d | 2026-01-05 | 2026-01-15 | A8410 | 356d |
| A9430 |  | Paints & Epoxy | 10d | 2026-01-05 | 2026-01-15 | A8420 | 364d |
| A9440 |  | Granite, ceramic | 10d | 2026-01-05 | 2026-01-15 | A8430 | 349d |
| A9450 |  | Terrazzo tiles | 10d | 2026-01-05 | 2026-01-15 | A8440 | 349d |
| A9460 |  | Fall ceiling | 10d | 2026-01-05 | 2026-01-15 | A8450 | 350d |
| A9470 |  | Safety Bollards | 10d | 2026-01-05 | 2026-01-15 | A8460 | 336d |
| A9480 |  | Geotextile Membrane | 10d | 2026-01-05 | 2026-01-15 | A8470 | 341d |
| A9490 |  | Curbstone | 10d | 2026-01-05 | 2026-01-15 | A8480 | 426d |
| A9500 |  | Sidewalk interlock/Concrete Pavers | 10d | 2026-01-05 | 2026-01-15 | A8490 | 222d |
| A9510 |  | Trees and Bushes-Landscape ( soft) | 10d | 2026-01-05 | 2026-01-15 | A8500 | 386d |
| A9520 |  | Concrete Masonry Blocks | 10d | 2026-01-05 | 2026-01-15 | A8510 | 378d |
| A9530 |  | Block work Accessories | 10d | 2026-01-05 | 2026-01-15 | A8520 | 378d |
| A9540 |  | Plaster to receive tile finish | 10d | 2026-01-05 | 2026-01-15 | A8530 | 188d |
| A9550 |  | Paint for External Areas | 10d | 2026-01-05 | 2026-01-15 | A8540 | 243d |
| A9560 |  | Paint for Internal Areas | 10d | 2026-01-05 | 2026-01-15 | A8550 | 323d |
| A9570 |  | Concrete repair & Curing material | 10d | 2026-01-05 | 2026-01-15 | A8560 | 403d |
| A9580 |  | Bonding agent | 10d | 2026-01-05 | 2026-01-15 | A8570 | 426d |
| A9590 |  | Concrete Mix for PC works | 10d | 2026-01-05 | 2026-01-15 | A8580 | 186d |
| A9600 |  | Concrete Mix for RC works | 10d | 2026-01-05 | 2026-01-15 | A8590 | 200d |
| A9610 |  | Reinforcement Steel | 10d | 2026-01-05 | 2026-01-15 | A8600 | 214d |
| A9620 |  | Sand Cement Plaster for Internal Walls | 10d | 2026-01-05 | 2026-01-15 | A8610 | 88d |
| A9630 |  | Sand Cement Plaster for External Walls | 10d | 2026-01-05 | 2026-01-15 | A8620 | 381d |

| ID | WBS | Task | Duration | Start | Finish | Predecessors | Total float |
| --- | --- | --- | --- | --- | --- | --- | --- |
| A9640 |  | Porcelain Tiling | 10d | 2026-01-05 | 2026-01-15 | A8630 | 349d |
| A9650 |  | False Ceilings | 10d | 2026-01-05 | 2026-01-15 | A8640 | 350d |
| A9660 |  | Carpet Flooring | 10d | 2026-01-05 | 2026-01-15 | A8650 | 384d |
| A9670 |  | Landscape (Hard ) | 10d | 2026-01-05 | 2026-01-15 | A8660 | 102d |
|  | ELE | **ELECTRICAL** |  | 2026-01-05 | 2026-01-28 |  |  |
| A9690 |  | Public address System | 21d | 2026-01-05 | 2026-01-28 | A8680 | 431d |
| A9700 |  | Fire Pump | 21d | 2026-01-05 | 2026-01-28 | A8690 | 401d |
| A9710 |  | Unit Substation & RMU | 21d | 2026-01-05 | 2026-01-28 | A8700 | 70d |
| A9720 |  | MV Cables | 10d | 2026-01-05 | 2026-01-15 | A8710 | 0d |
| A9730 |  | LV Cables | 21d | 2026-01-05 | 2026-01-28 | A8720 | 341d |
| A9740 |  | LV Wire | 21d | 2026-01-05 | 2026-01-28 | A8730 | 372d |
| A9750 |  | Electrical Panels | 21d | 2026-01-05 | 2026-01-28 | A8740 | 384d |
| A9760 |  | LV Conductors (part of the panels) | 21d | 2026-01-05 | 2026-01-28 | A8750 | 372d |
| A9770 |  | Underground Ducts-UPVC | 21d | 2026-01-05 | 2026-01-28 | A8760 | 17d |
| A9780 |  | Underground Ducts-HDPE | 21d | 2026-01-05 | 2026-01-28 | A8770 | 354d |
| A9790 |  | External Lighting Fixtures | 21d | 2026-01-05 | 2026-01-28 | A8780 | 426d |
| A9800 |  | Street Lights Lighting Fixtures | 16d | 2026-01-05 | 2026-01-22 | A8790 | 444d |
| A9810 |  | Street Lighting Poles | 16d | 2026-01-05 | 2026-01-22 | A8800 | 444d |
| A9820 |  | PVC & EMT conduits | 16d | 2026-01-05 | 2026-01-22 | A8810 | 331d |
| A9830 |  | LIGHTING FIXTURES (buildings Internal) | 16d | 2026-01-05 | 2026-01-22 | A8820 | 445d |
| A9840 |  | Wiring Devices and Switches | 16d | 2026-01-05 | 2026-01-22 | A8830 | 445d |
| A9850 |  | DALI Cabinet (external lighting control) | 16d | 2026-01-05 | 2026-01-22 | A8840 | 445d |
| A9860 |  | Earthing System | 16d | 2026-01-05 | 2026-01-22 | A8850 | 445d |
| A9880 |  | GI duct work with insulation & Support | 16d | 2026-01-05 | 2026-01-22 | A8870 | 369d |
| A9890 |  | Drain & Clean Out | 16d | 2026-01-05 | 2026-01-22 | A8880 | 394d |
| A9900 |  | Split AC Package | 16d | 2026-01-05 | 2026-01-22 | A8890 | 378d |
| A9910 |  | Ventilation Unit-Fan | 16d | 2026-01-05 | 2026-01-22 | A8900 | 378d |
| A9920 |  | Cable glands, lugs and accessories | 21d | 2026-01-05 | 2026-01-28 | A8910 | 457d |
|  | MECH | **MECHANICAL** |  | 2026-01-05 | 2026-01-15 |  |  |
| A10000 |  | Surface Box for Gate valve | 10d | 2026-01-05 | 2026-01-15 | A8990 | 74d |
| A10010 |  | Air Release Valves | 10d | 2026-01-05 | 2026-01-15 | A9000 | 134d |
| A10020 |  | Washout Valves | 10d | 2026-01-05 | 2026-01-15 | A9010 | 214d |
| A10030 |  | Connection Chamber | 10d | 2026-01-05 | 2026-01-15 | A9020 | 188d |
| A10040 |  | HDPE House Connections Chambers | 10d | 2026-01-05 | 2026-01-15 | A9030 | 103d |
| A10050 |  | Hose Bib | 10d | 2026-01-05 | 2026-01-15 | A9040 | 74d |
| A10060 |  | PPR Pipes & Fittings | 10d | 2026-01-05 | 2026-01-15 | A9050 | 144d |
| A10070 |  | Water Hammer Arrestor & TMV | 10d | 2026-01-05 | 2026-01-15 | A9060 | 444d |
| A10080 |  | Sewage Manholes Cover with frame | 10d | 2026-01-05 | 2026-01-15 | A9070 | 63d |
| A10090 |  | Irrigation Manholes Cover with frame | 10d | 2026-01-05 | 2026-01-15 | A9080 | 133d |
| A10100 |  | Potable Manholes Cover with frame | 10d | 2026-01-05 | 2026-01-15 | A9090 | 189d |
| A10110 |  | ICT Manholes Cover with frame | 10d | 2026-01-05 | 2026-01-15 | A9100 | 245d |
| A10120 |  | Polyethylene Sheets | 10d | 2026-01-05 | 2026-01-15 | A9110 | 21d |
| A10130 |  | Warning Tape | 10d | 2026-01-05 | 2026-01-15 | A9120 | 83d |
| A10140 |  | Bitumen Paint (Bituminous Damp proofing) | 10d | 2026-01-05 | 2026-01-15 | A9130 | 431d |
| A10150 |  | Anti Termite & Pest Contro; | 10d | 2026-01-05 | 2026-01-15 | A9140 | 306d |
| A10160 |  | Warning tape | 10d | 2026-01-05 | 2026-01-15 | A9150 | 68d |
| A10170 |  | Fire Hydrants | 10d | 2026-01-05 | 2026-01-15 | A9160 | 189d |
| A10180 |  | OS & Y Gate valve | 10d | 2026-01-05 | 2026-01-15 | A9170 | 264d |
| A10190 |  | Fire Extinguisher | 10d | 2026-01-05 | 2026-01-15 | A9180 | 102d |
| A10200 |  | Fire Alarm systems & cable | 10d | 2026-01-05 | 2026-01-15 | A9190 | 172d |
| A10210 |  | Water Heater | 10d | 2026-01-05 | 2026-01-15 | A9200 | 374d |
| A10220 |  | Termination Kits | 10d | 2026-01-05 | 2026-01-15 | A9210 | 454d |
| A9930 |  | Secondary Irrigation System | 10d | 2026-01-05 | 2026-01-15 | A8920 | 193d |
| A9940 |  | HDPE Pipes & Fittings | 10d | 2026-01-05 | 2026-01-15 | A8930 | 44d |
| A9950 |  | UPVC Pipes & Fittings | 10d | 2026-01-05 | 2026-01-15 | A8940 | 183d |
| A9960 |  | GRP Pipes & Fittings | 10d | 2026-01-05 | 2026-01-15 | A8950 | 107d |
| A9970 |  | Sanitory Ware, Plumbing Fixtures, Toilet Accessories | 10d | 2026-01-05 | 2026-01-15 | A8960 | 362d |
| A9980 |  | Water Tank | 10d | 2026-01-05 | 2026-01-15 | A8970 | 451d |
| A9990 |  | Gate Valves | 10d | 2026-01-05 | 2026-01-15 | A8980 | 4d |
|  | MTD | **MATERIAL DELIVERY** |  | 2026-01-13 | 2027-11-03 |  |  |
|  | CVA | **CIVIL & ARCHITECTURE** |  | 2026-01-17 | 2027-08-31 |  |  |
|  | 1 | **Long Lead Items Civil** |  | 2026-01-17 | 2026-12-31 |  |  |
| A10230 |  | Sewer Manholes | 140d | 2026-01-17 | 2026-06-28 | A9230 | 1d |
| A10240 |  | Storm Manholes | 85d | 2026-01-17 | 2026-04-25 | A9240 | 0d |
| A10250 |  | Telecome Manholes | 160d | 2026-06-29 | 2026-12-31 | A9250, A10230 | 1d |
|  | 2 | **Short Lead Item Civil** |  | 2026-01-17 | 2027-08-31 |  |  |
| A10280 |  | Aggregate Sub-Grade & Basecourse | 78d | 2026-01-17 | 2026-04-16 | A9280 | 0d |
| A10290 |  | Asphalt Binder | 81d | 2026-01-17 | 2026-04-20 | A9290 | 0d |
| A10300 |  | Traffic signage | 21d | 2026-01-17 | 2026-02-09 | A9300 | 57d |
| A10620 |  | Sand Cement Plaster for Internal Walls | 14d | 2026-01-17 | 2026-02-01 | A9620 | 88d |

| ID | WBS | Task | Duration | Start | Finish | Predecessors | Total float |
| --- | --- | --- | --- | --- | --- | --- | --- |
| A10380 |  | Structural steel | 120d | 2026-02-02 | 2026-06-21 | A9380, A10620 | 230d |
| A10540 |  | Plaster to receive tile finish | 55d | 2026-02-02 | 2026-04-06 | A9540, A10620 | 174d |
| A10590 |  | Concrete Mix for PC works | 14d | 2026-02-02 | 2026-02-17 | A9590, A10620 | 172d |
| A10670 |  | Landscape (Hard ) | 120d | 2026-02-02 | 2026-06-21 | A9670, A10620 | 88d |
| A10600 |  | Concrete Mix for RC works | 14d | 2026-02-18 | 2026-03-05 | A9600, A10620, A10590 | 172d |
| A10610 |  | Reinforcement Steel | 120d | 2026-03-07 | 2026-07-23 | A9610, A10620, A10600 | 172d |
| A10550 |  | Paint for External Areas | 80d | 2026-04-07 | 2026-07-08 | A9550, A10620, A10540 | 174d |
| A10500 |  | Sidewalk interlock/Concrete Pavers | 120d | 2026-06-22 | 2026-11-08 | A9500, A10620, A10290, A10670 | 88d |
| A10560 |  | Paint for Internal Areas | 80d | 2026-07-09 | 2026-10-10 | A9560, A10620, A10550 | 174d |
| A10630 |  | Sand Cement Plaster for External Walls | 80d | 2026-07-25 | 2026-10-25 | A9630, A10620, A10610 | 219d |
| A10260 |  | Lighting Poles Precast Foundation & Bolt | 70d | 2026-09-08 | 2026-11-28 | A9260, A10930 | 170d |
| A10570 |  | Concrete repair & Curing material | 14d | 2026-10-11 | 2026-10-26 | A9570, A10620, A10560 | 174d |
| A10580 |  | Bonding agent | 80d | 2026-10-27 | 2027-01-27 | A9580, A10620, A10570 | 183d |
| A10310 |  | Plant and trees | 70d | 2026-11-29 | 2027-02-17 | A9310, A10290, A10260 | 170d |
| A10270 |  | Concrete curb | 90d | 2027-02-10 | 2027-05-25 | A9270, A10330 SS, A10330 FF | 1d |
| A10330 |  | Paving blocks 200*100*60 mm | 80d | 2027-02-10 | 2027-05-13 | A9330, A55800 | 1d |
| A10350 |  | Access ladder | 110d | 2027-02-10 | 2027-06-17 | A9350, A10620, A10330 SS, A10330 FF | 2d |
| A10360 |  | Stanless steel Handril | 120d | 2027-02-10 | 2027-06-29 | A9360, A10620, A10330 SS, A10330 FF | 32d |
| A10370 |  | Ductile iron steel cover | 120d | 2027-02-10 | 2027-06-29 | A9370, A10620, A10330 SS, A10330 FF | 1d |
| A10390 |  | Waterproofing Work | 120d | 2027-02-10 | 2027-06-29 | A9390, A10620, A10330 SS, A10330 FF | 7d |
| A10400 |  | Waterproofing membrane | 120d | 2027-02-10 | 2027-06-29 | A9400, A10620, A10330 SS, A10330 FF | 7d |
| A10410 |  | Doors - (Glass & Sliding) | 120d | 2027-02-10 | 2027-06-29 | A9410, A10620, A10330 SS, A10330 FF | 22d |
| A10420 |  | Windows | 120d | 2027-02-10 | 2027-06-29 | A9420, A10620, A10330 SS, A10330 FF | 22d |
| A10430 |  | Paints & Epoxy | 120d | 2027-02-10 | 2027-06-29 | A9430, A10620, A10330 SS, A10330 FF | 30d |
| A10440 |  | Granite, ceramic | 120d | 2027-02-10 | 2027-06-29 | A9440, A10620, A10330 SS, A10330 FF | 15d |
| A10450 |  | Terrazzo tiles | 120d | 2027-02-10 | 2027-06-29 | A9450, A10620, A10330 SS, A10330 FF | 15d |
| A10460 |  | Fall ceiling | 120d | 2027-02-10 | 2027-06-29 | A9460, A10620, A10330 SS, A10330 FF | 16d |
| A10470 |  | Safety Bollards | 90d | 2027-02-10 | 2027-05-25 | A9470, A10620, A10330 SS, A10330 FF | 2d |
| A10480 |  | Geotextile Membrane | 120d | 2027-02-10 | 2027-06-29 | A9480, A10620, A10330 SS, A10330 FF | 7d |
| A10510 |  | Trees and Bushes-Landscape ( soft) | 120d | 2027-02-10 | 2027-06-29 | A9510, A10620, A10330 SS, A10330 FF | 52d |
| A10520 |  | Concrete Masonry Blocks | 120d | 2027-02-10 | 2027-06-29 | A9520, A10620, A10330 SS, A10330 FF | 44d |
| A10530 |  | Block work Accessories | 120d | 2027-02-10 | 2027-06-29 | A9530, A10620, A10330 SS, A10330 FF | 44d |
| A10640 |  | Porcelain Tiling | 120d | 2027-02-10 | 2027-06-29 | A9640, A10620, A10330 SS, A10330 FF | 15d |
| A10650 |  | False Ceilings | 120d | 2027-02-10 | 2027-06-29 | A9650, A10620, A10330 SS, A10330 FF | 16d |
| A10660 |  | Carpet Flooring | 120d | 2027-02-10 | 2027-06-29 | A9660, A10620, A10330 SS, A10330 FF | 50d |
| A10320 |  | Garbage Bin, trash & litter | 56d | 2027-02-18 | 2027-04-24 | A9320, A10310 | 170d |
| A10340 |  | Blocks & Accessories | 60d | 2027-02-24 | 2027-05-04 | A9340, A10620, A55810 | 41d |
| A11230 |  | Asphalt Wearing Course | 159d | 2027-02-28 | 2027-08-31 | A10930 FS+7d, A10270 SS+15d | 1d |
| A10490 |  | Curbstone | 80d | 2027-05-26 | 2027-08-26 | A9490, A10290, A10470, A10270 SS | 2d |
|  | ELE | **ELECTRICAL** |  | 2026-01-17 | 2027-11-03 |  |  |
|  | 1 | **Long Lead Items Elec** |  | 2026-01-17 | 2027-11-03 |  |  |
| A10720 |  | MV Cables | 168d | 2026-01-17 | 2026-07-30 | A9720 | 0d |
| A10710 |  | Unit Substation & RMU | 112d | 2026-01-29 | 2026-06-08 | A9710 | 70d |
| A10770 |  | Underground Ducts-UPVC | 112d | 2026-01-29 | 2026-06-08 | A9770 | 17d |
| A10690 |  | Public address System | 70d | 2027-03-02 | 2027-05-22 | A9690, A55820 | 91d |
| A10700 |  | Fire Pump | 70d | 2027-03-02 | 2027-05-22 | A9700 FS+14d, A55820 | 75d |
| A10730 |  | LV Cables | 112d | 2027-03-02 | 2027-07-10 | A9730, A55820 | 1d |
| A10740 |  | LV Wire | 112d | 2027-03-02 | 2027-07-10 | A9740, A55820 | 32d |
| A10750 |  | Electrical Panels | 112d | 2027-03-02 | 2027-07-10 | A9750, A55820 | 44d |
| A10760 |  | LV Conductors (part of the panels) | 112d | 2027-03-02 | 2027-07-10 | A9760, A55820 | 32d |
| A10820 |  | PVC & EMT conduits | 100d | 2027-03-02 | 2027-06-26 | A9820 FS+14d, A55820 | 0d |
| A10890 |  | Drain & Clean Out | 112d | 2027-03-02 | 2027-07-10 | A9890, A55820 | 49d |
| A10900 |  | Split AC Package | 112d | 2027-03-02 | 2027-07-10 | A9900, A55820 | 33d |
| A10910 |  | Ventilation Unit-Fan | 112d | 2027-03-02 | 2027-07-10 | A9910, A55820 | 33d |
| A10800 |  | Street Lights Lighting Fixtures | 100d | 2027-07-11 | 2027-11-03 | A9800 FS+14d, A10810 SS | 1d |
| A10810 |  | Street Lighting Poles | 40d | 2027-07-11 | 2027-08-25 | A9810 FS+14d, A10730 | 1d |
|  | 2 | **Short Lead Item Elec** |  | 2027-03-02 | 2027-08-17 |  |  |
| A10780 |  | Underground Ducts-HDPE | 90d | 2027-03-02 | 2027-06-14 | A9780, A10820 SS | 14d |
| A10880 |  | GI duct work with insulation & Support | 80d | 2027-03-02 | 2027-06-02 | A9880, A10820 SS | 24d |
| A10790 |  | External Lighting Fixtures | 45d | 2027-06-27 | 2027-08-17 | A9790 FS+14d, A10820 | 0d |
| A10830 |  | LIGHTING FIXTURES (buildings Internal) | 45d | 2027-06-27 | 2027-08-17 | A9830, A10820 | 0d |
| A10840 |  | Wiring Devices and Switches | 45d | 2027-06-27 | 2027-08-17 | A9840, A10820 | 0d |
| A10850 |  | DALI Cabinet (external lighting control) | 45d | 2027-06-27 | 2027-08-17 | A9850, A10820 | 0d |
| A10860 |  | Earthing System | 45d | 2027-06-27 | 2027-08-17 | A9860, A10820 | 0d |
| A10920 |  | Cable glands, lugs and accessories | 28d | 2027-06-27 | 2027-07-28 | A9920, A10820 | 17d |
|  | MECH | **MECHANICAL** |  | 2026-01-13 | 2027-08-23 |  |  |
| A10940 |  | HDPE Pipes & Fittings | 56d | 2026-01-13 | 2026-03-18 | A9940 SS+7d, A9940 FF+7d | 44d |
| A11120 |  | Polyethylene Sheets | 56d | 2026-01-13 | 2026-03-18 | A10120 SS+7d, A10120 FF+7d | 21d |
| A10950 |  | UPVC Pipes & Fittings | 28d | 2026-01-17 | 2026-02-17 | A9950 | 183d |
| A10960 |  | GRP Pipes & Fittings | 42d | 2026-01-17 | 2026-03-05 | A9960 | 107d |

| ID | WBS | Task | Duration | Start | Finish | Predecessors | Total float |
| --- | --- | --- | --- | --- | --- | --- | --- |
| A10990 |  | Gate Valves | 70d | 2026-01-17 | 2026-04-07 | A9990 | 4d |
| A11080 |  | Sewage Manholes Cover with frame | 70d | 2026-01-17 | 2026-04-07 | A10080 | 63d |
| A11130 |  | Warning Tape | 14d | 2026-01-17 | 2026-02-01 | A10130 | 83d |
| A11160 |  | Warning tape | 21d | 2026-01-17 | 2026-02-09 | A10160 | 68d |
| A11170 |  | Fire Hydrants | 95d | 2026-02-09 | 2026-05-30 | A10170 FS+20d | 189d |
| A11190 |  | Fire Extinguisher | 70d | 2026-02-10 | 2026-05-02 | A10190 FS+21d | 102d |
| A11030 |  | Connection Chamber | 70d | 2026-02-21 | 2026-05-12 | A10030 FS+30d | 188d |
| A11040 |  | HDPE House Connections Chambers | 70d | 2026-02-21 | 2026-05-12 | A10040 FS+30d | 103d |
| A11150 |  | Anti Termite & Pest Contro; | 21d | 2026-03-07 | 2026-03-30 | A10150, A10600 | 264d |
| A11050 |  | Hose Bib | 70d | 2026-03-19 | 2026-06-08 | A10050, A11120 | 21d |
| A11000 |  | Surface Box for Gate valve | 60d | 2026-04-08 | 2026-06-16 | A10000, A10990 | 4d |
| A11090 |  | Irrigation Manholes Cover with frame | 56d | 2026-04-08 | 2026-06-11 | A10090, A11080 | 63d |
| A10930 |  | Secondary Irrigation System | 110d | 2026-05-03 | 2026-09-07 | A9930, A11200 SS | 102d |
| A11200 |  | Fire Alarm systems & cable | 70d | 2026-05-03 | 2026-07-22 | A10200 FS+21d, A11190 | 102d |
| A11060 |  | PPR Pipes & Fittings | 120d | 2026-06-09 | 2026-10-26 | A10060, A11050 | 21d |
| A11100 |  | Potable Manholes Cover with frame | 56d | 2026-06-13 | 2026-08-16 | A10100, A11090 | 63d |
| A11010 |  | Air Release Valves | 80d | 2026-06-17 | 2026-09-17 | A10010, A11000 | 4d |
| A11110 |  | ICT Manholes Cover with frame | 56d | 2026-08-17 | 2026-10-20 | A10110, A11100 | 63d |
| A11020 |  | Washout Valves | 50d | 2026-09-19 | 2026-11-15 | A10020, A11010 | 4d |
| A11180 |  | OS & Y Gate valve | 40d | 2026-11-16 | 2026-12-31 | A10180, A11020 | 4d |
| A10970 |  | Sanitory Ware, Plumbing Fixtures, Toilet Accessories | 150d | 2027-03-02 | 2027-08-23 | A9970, A11000, A10820 SS | 11d |
| A11140 |  | Bitumen Paint (Bituminous Damp proofing) | 30d | 2027-03-02 | 2027-04-05 | A10140, A10820 SS | 80d |
| A11210 |  | Water Heater | 70d | 2027-03-02 | 2027-05-22 | A10210, A11200, A10820 SS | 23d |
| A11070 |  | Water Hammer Arrestor & TMV | 21d | 2027-05-23 | 2027-06-15 | A10070, A11210, A10820 SS | 23d |
| A10980 |  | Water Tank | 45d | 2027-06-27 | 2027-08-17 | A9980, A11200, A10820 | 0d |
| A11220 |  | Termination Kits | 42d | 2027-06-27 | 2027-08-14 | A10220, A11090, A10820 | 3d |
|  | CON | **CONSTRUCTION** |  | 2026-01-03 | 2027-12-01 |  |  |
|  | Zone A | **Zone A** |  | 2026-01-03 | 2027-11-17 |  |  |
|  | PREP | **EARTH WORK** |  | 2026-01-03 | 2026-07-08 |  |  |
|  | R1 | **Road 1** |  | 2026-01-03 | 2026-03-12 |  |  |
|  | DE | **Demolition** |  | 2026-01-03 | 2026-01-19 |  |  |
| A56630 |  | Demolition of existing Asphalt | 5d | 2026-01-03 | 2026-01-07 | A1010 | 2d |
| A56640 |  | Compaction of existing aggregate base course layer | 5d | 2026-01-08 | 2026-01-13 | A56630 | 30d |
| A56650 |  | Demolition of existing Kerbs | 5d | 2026-01-14 | 2026-01-19 | A56640, A2930, A2940, A2950, A2960, A2970, A2980, A2990 | 30d |
|  | EW | **Earth Work** |  | 2026-01-20 | 2026-03-12 |  |  |
| A56600 |  | Earthworks - Cut Excavation | 14d | 2026-01-20 | 2026-02-04 | A56650, A1010 | 30d |
| A56610 |  | Earthworks - Fill & Compaction | 21d | 2026-02-05 | 2026-03-01 | A56600 | 30d |
| A56620 |  | Subgrade | 10d | 2026-03-02 | 2026-03-12 | A56610, A2930, A2940, A2950, A2960, A2970, A2980, A2990, A4270 | 30d |
|  | R2 | **Road 2** |  | 2026-01-08 | 2026-03-21 |  |  |
|  | DE | **Demolition** |  | 2026-01-08 | 2026-02-04 |  |  |
| A59230 |  | Demolition of existing Asphalt | 12d | 2026-01-08 | 2026-01-21 | A56630 | 2d |
| A59240 |  | Compaction of existing aggregate base course layer | 7d | 2026-01-22 | 2026-01-29 | A59230 | 31d |
| A59250 |  | Demolition of existing Kerbs | 5d | 2026-01-31 | 2026-02-04 | A59240 | 31d |
|  | EW | **Earth Work** |  | 2026-02-05 | 2026-03-21 |  |  |
| A59200 |  | Earthworks - Cut Excavation | 14d | 2026-02-05 | 2026-02-21 | A59250 | 31d |
| A59210 |  | Earthworks - Fill & Compaction | 14d | 2026-02-22 | 2026-03-09 | A59200 | 31d |
| A59220 |  | Subgrade | 10d | 2026-03-10 | 2026-03-21 | A59210 | 31d |
|  | 3 | **Road 3** |  | 2026-01-22 | 2026-03-21 |  |  |
|  | DE | **Demolition** |  | 2026-01-22 | 2026-02-08 |  |  |
| A59290 |  | Demolition of existing Asphalt | 5d | 2026-01-22 | 2026-01-27 | A59230 | 2d |
| A59300 |  | Compaction of existing aggregate base course layer | 5d | 2026-01-28 | 2026-02-02 | A59290 | 2d |
| A59310 |  | Demolition of existing Kerbs | 5d | 2026-02-03 | 2026-02-08 | A59300 | 2d |
|  | EW | **Earth Work** |  | 2026-02-09 | 2026-03-21 |  |  |
| A59260 |  | Earthworks - Cut Excavation | 14d | 2026-02-09 | 2026-02-24 | A59310 | 2d |
| A59270 |  | Earthworks - Fill & Compaction | 14d | 2026-02-25 | 2026-03-12 | A59260 | 39d |
| A59280 |  | Subgrade | 7d | 2026-03-14 | 2026-03-21 | A59270 | 39d |
|  | R4 | **Road 4** |  | 2026-02-25 | 2026-04-01 |  |  |
|  | EW | **Earth Work** |  | 2026-02-25 | 2026-04-01 |  |  |
| A59320 |  | Earthworks - Cut Excavation | 5d | 2026-02-25 | 2026-03-02 | A59260 | 2d |
| A59330 |  | Earthworks - Fill & Compaction | 21d | 2026-03-03 | 2026-03-26 | A59320 | 35d |
| A59340 |  | Subgrade | 5d | 2026-03-28 | 2026-04-01 | A59330 | 35d |
|  | R5 | **Road 5** |  | 2026-03-03 | 2026-04-05 |  |  |
|  | EW | **Earth Work** |  | 2026-03-03 | 2026-04-05 |  |  |
| A59350 |  | Earthworks - Cut Excavation | 14d | 2026-03-03 | 2026-03-18 | A59320 | 2d |
| A59360 |  | Earthworks - Fill & Compaction | 10d | 2026-03-19 | 2026-03-30 | A59350 | 38d |
| A59370 |  | Subgrade | 5d | 2026-03-31 | 2026-04-05 | A59360 | 38d |
|  | R6 | **Road 6** |  | 2026-03-19 | 2026-04-27 |  |  |
|  | EW | **Earth Work** |  | 2026-03-19 | 2026-04-27 |  |  |
| A59380 |  | Earthworks - Cut Excavation | 14d | 2026-03-19 | 2026-04-04 | A59350 | 2d |
| A59390 |  | Earthworks - Fill & Compaction | 10d | 2026-04-05 | 2026-04-15 | A59380 | 2d |

| ID | WBS | Task | Duration | Start | Finish | Predecessors | Total float |
| --- | --- | --- | --- | --- | --- | --- | --- |
| A59400 |  | Subgrade | 10d | 2026-04-16 | 2026-04-27 | A59390 | 25d |
|  | R7 | **Road 7** |  | 2026-04-05 | 2026-05-03 |  |  |
|  | EW | **Earth Work** |  | 2026-04-05 | 2026-05-03 |  |  |
| A59410 |  | Earthworks - Cut Excavation | 5d | 2026-04-05 | 2026-04-09 | A59380 | 19d |
| A59420 |  | Earthworks - Fill & Compaction | 10d | 2026-04-11 | 2026-04-21 | A59410 | 26d |
| A59430 |  | Subgrade | 10d | 2026-04-22 | 2026-05-03 | A59420 | 26d |
|  | R8 | **Road 8** |  | 2026-04-11 | 2026-05-18 |  |  |
|  | EW | **Earth Work** |  | 2026-04-11 | 2026-05-18 |  |  |
| A59440 |  | Earthworks - Cut Excavation | 5d | 2026-04-11 | 2026-04-15 | A59410 | 19d |
| A59450 |  | Earthworks - Fill & Compaction | 21d | 2026-04-16 | 2026-05-10 | A59440 | 19d |
| A59460 |  | Subgrade | 10d | 2026-05-07 | 2026-05-18 | A59450 SS+7d, A59450 FF+7d | 19d |
|  | R9 | **Road 9** |  | 2026-01-03 | 2026-02-23 |  |  |
|  | EW | **Earth Work** |  | 2026-01-03 | 2026-02-23 |  |  |
| A59470 |  | Earthworks - Cut Excavation | 14d | 2026-01-03 | 2026-01-18 | A1010 | 30d |
| A59480 |  | Earthworks - Fill & Compaction | 21d | 2026-01-19 | 2026-02-11 | A59470 | 97d |
| A59490 |  | Subgrade | 10d | 2026-02-12 | 2026-02-23 | A59480 | 97d |
|  | R10 | **Road10** |  | 2026-01-19 | 2026-03-11 |  |  |
|  | EW | **Earth Work** |  | 2026-01-19 | 2026-03-11 |  |  |
| A59500 |  | Earthworks - Cut Excavation | 14d | 2026-01-19 | 2026-02-03 | A59470 | 30d |
| A59510 |  | Earthworks - Fill & Compaction | 21d | 2026-02-04 | 2026-02-28 | A59500 | 89d |
| A59520 |  | Subgrade | 10d | 2026-03-01 | 2026-03-11 | A59510 | 89d |
|  | R11 | **Road11** |  | 2026-02-04 | 2026-03-28 |  |  |
|  | EW | **Earth Work** |  | 2026-02-04 | 2026-03-28 |  |  |
| A59530 |  | Earthworks - Cut Excavation | 14d | 2026-02-04 | 2026-02-19 | A59500 | 30d |
| A59540 |  | Earthworks - Fill & Compaction | 21d | 2026-02-21 | 2026-03-16 | A59530 | 82d |
| A59550 |  | Subgrade | 10d | 2026-03-17 | 2026-03-28 | A59540 | 82d |
|  | R12 | **Road12** |  | 2026-02-21 | 2026-04-13 |  |  |
|  | EW | **Earth Work** |  | 2026-02-21 | 2026-04-13 |  |  |
| A59560 |  | Earthworks - Cut Excavation | 14d | 2026-02-21 | 2026-03-08 | A59530 | 30d |
| A59570 |  | Earthworks - Fill & Compaction | 21d | 2026-03-09 | 2026-04-01 | A59560 | 68d |
| A59580 |  | Subgrade | 10d | 2026-04-02 | 2026-04-13 | A59570 | 68d |
|  | R13 | **Road13** |  | 2026-03-09 | 2026-04-29 |  |  |
|  | EW | **Earth Work** |  | 2026-03-09 | 2026-04-29 |  |  |
| A59590 |  | Earthworks - Cut Excavation | 14d | 2026-03-09 | 2026-03-24 | A59560 | 30d |
| A59600 |  | Earthworks - Fill & Compaction | 21d | 2026-03-25 | 2026-04-18 | A59590 | 60d |
| A59610 |  | Subgrade | 10d | 2026-04-19 | 2026-04-29 | A59600 | 60d |
|  | R14 | **Road14** |  | 2026-03-25 | 2026-05-16 |  |  |
|  | EW | **Earth Work** |  | 2026-03-25 | 2026-05-16 |  |  |
| A59620 |  | Earthworks - Cut Excavation | 14d | 2026-03-25 | 2026-04-09 | A59590 | 30d |
| A59630 |  | Earthworks - Fill & Compaction | 21d | 2026-04-11 | 2026-05-04 | A59620 | 52d |
| A59640 |  | Subgrade | 10d | 2026-05-05 | 2026-05-16 | A59630 | 52d |
|  | R15 | **Road15** |  | 2026-04-11 | 2026-06-01 |  |  |
|  | EW | **Earth Work** |  | 2026-04-11 | 2026-06-01 |  |  |
| A59650 |  | Earthworks - Cut Excavation | 14d | 2026-04-11 | 2026-04-26 | A59620 | 30d |
| A59660 |  | Earthworks - Fill & Compaction | 21d | 2026-04-27 | 2026-05-20 | A59650 | 44d |
| A59670 |  | Subgrade | 10d | 2026-05-21 | 2026-06-01 | A59660 | 44d |
|  | R16 | **Road16** |  | 2026-04-27 | 2026-06-13 |  |  |
|  | DE | **Demolition** |  | 2026-04-27 | 2026-05-16 |  |  |
| A59710 |  | Demolition of existing Asphalt | 6d | 2026-04-27 | 2026-05-03 | A59650 | 30d |
| A59720 |  | Compaction of existing aggregate base course layer | 6d | 2026-05-04 | 2026-05-10 | A59710 | 40d |
| A59730 |  | Demolition of existing Kerbs | 5d | 2026-05-11 | 2026-05-16 | A59720 | 40d |
|  | EW | **Earth Work** |  | 2026-05-17 | 2026-06-13 |  |  |
| A59680 |  | Earthworks - Cut Excavation | 14d | 2026-05-17 | 2026-06-01 | A59730 | 40d |
| A59690 |  | Earthworks - Fill & Compaction | 5d | 2026-06-02 | 2026-06-07 | A59680 | 40d |
| A59700 |  | Subgrade | 5d | 2026-06-08 | 2026-06-13 | A59690 | 40d |
|  | R17 | **Road17** |  | 2026-05-04 | 2026-06-18 |  |  |
|  | DE | **Demolition** |  | 2026-05-04 | 2026-05-20 |  |  |
| A59770 |  | Demolition of existing Asphalt | 5d | 2026-05-04 | 2026-05-09 | A59710 | 30d |
| A59780 |  | Compaction of existing aggregate base course layer | 5d | 2026-05-10 | 2026-05-14 | A59770 | 41d |
| A59790 |  | Demolition of existing Kerbs | 5d | 2026-05-16 | 2026-05-20 | A59780 | 41d |
|  | EW | **Earth Work** |  | 2026-05-21 | 2026-06-18 |  |  |
| A59740 |  | Earthworks - Cut Excavation | 5d | 2026-05-21 | 2026-05-26 | A59790 | 41d |
| A59750 |  | Earthworks - Fill & Compaction | 10d | 2026-05-27 | 2026-06-07 | A59740 | 41d |
| A59760 |  | Subgrade | 10d | 2026-06-08 | 2026-06-18 | A59750 | 41d |
|  | CO1 | **Collector 1** |  | 2026-05-10 | 2026-07-08 |  |  |
|  | DE | **Demolition** |  | 2026-05-10 | 2026-05-27 |  |  |
| A59830 |  | Demolition of existing Asphalt | 6d | 2026-05-10 | 2026-05-16 | A59770 | 30d |
| A59840 |  | Compaction of existing aggregate base course layer | 5d | 2026-05-17 | 2026-05-21 | A59830 | 30d |
| A59850 |  | Demolition of existing Kerbs | 5d | 2026-05-23 | 2026-05-27 | A59840 | 30d |
|  | EW | **Earth Work** |  | 2026-05-28 | 2026-07-08 |  |  |

| ID | WBS | Task | Duration | Start | Finish | Predecessors | Total float |
| --- | --- | --- | --- | --- | --- | --- | --- |
| A59800 |  | Earthworks - Cut Excavation | 5d | 2026-05-28 | 2026-06-02 | A59850 | 30d |
| A59810 |  | Earthworks - Fill & Compaction | 21d | 2026-06-03 | 2026-06-27 | A59800 | 30d |
| A59820 |  | Subgrade | 10d | 2026-06-28 | 2026-07-08 | A59810 | 30d |
|  | 1 | **STORM NETWORK** |  | 2026-02-12 | 2027-01-16 |  |  |
|  | LR 01 | **LR 01** |  | 2026-03-19 | 2026-11-30 |  |  |
|  | MH-32-A-15 /MH-32-A-14 | **MH-32-A-15 /MH-32-A-14** |  | 2026-08-06 | 2026-09-21 |  |  |
| A74430 |  | Excavation | 10d | 2026-08-06 | 2026-08-17 | A74480, A1080 | 44d |
| A74440 |  | Pipe Laying | 10d | 2026-08-18 | 2026-08-29 | A74430, A11160 | 44d |
| A74450 |  | Install Manhole | 10d | 2026-08-18 | 2026-08-29 | A74430, A10240 | 54d |
| A74460 |  | Testing & Inspection | 10d | 2026-08-30 | 2026-09-09 | A74440 | 44d |
| A74470 |  | Backfilling & Compaction | 10d | 2026-09-10 | 2026-09-21 | A74460, A74450, A74520 | 44d |
|  | MH-32-A-16 /MH-32-A-15 | **MH-32-A-16 /MH-32-A-15** |  | 2026-08-18 | 2026-10-03 |  |  |
| A74380 |  | Excavation | 10d | 2026-08-18 | 2026-08-29 | A74430, A1080 | 44d |
| A74390 |  | Pipe Laying | 10d | 2026-08-30 | 2026-09-09 | A74380, A11160 | 44d |
| A74400 |  | Install Manhole | 10d | 2026-08-30 | 2026-09-09 | A74380, A10240 | 54d |
| A74410 |  | Testing & Inspection | 10d | 2026-09-10 | 2026-09-21 | A74390 | 44d |
| A74420 |  | Backfilling & Compaction | 10d | 2026-09-22 | 2026-10-03 | A74410, A74400, A74470 | 44d |
|  | MH-32-A-17 /MH-32-A-16 | **MH-32-A-17 /MH-32-A-16** |  | 2026-08-30 | 2026-10-14 |  |  |
| A74330 |  | Excavation | 10d | 2026-08-30 | 2026-09-09 | A74380, A1080 | 44d |
| A74340 |  | Pipe Laying | 10d | 2026-09-10 | 2026-09-21 | A74330, A11160 | 44d |
| A74350 |  | Install Manhole | 10d | 2026-09-10 | 2026-09-21 | A74330, A10240 | 54d |
| A74360 |  | Testing & Inspection | 10d | 2026-09-22 | 2026-10-03 | A74340 | 44d |
| A74370 |  | Backfilling & Compaction | 10d | 2026-10-04 | 2026-10-14 | A74360, A74350, A74420 | 44d |
|  | MH-32-A-18 /MH-32-A-17 | **MH-32-A-18 /MH-32-A-17** |  | 2026-09-10 | 2026-10-26 |  |  |
| A74280 |  | Excavation | 10d | 2026-09-10 | 2026-09-21 | A74330, A1080 | 44d |
| A74290 |  | Pipe Laying | 10d | 2026-09-22 | 2026-10-03 | A74280, A11160 | 44d |
| A74300 |  | Install Manhole | 10d | 2026-09-22 | 2026-10-03 | A74280, A10240 | 54d |
| A74310 |  | Testing & Inspection | 10d | 2026-10-04 | 2026-10-14 | A74290 | 44d |
| A74320 |  | Backfilling & Compaction | 10d | 2026-10-15 | 2026-10-26 | A74310, A74300, A74370 | 44d |
|  | MH-32-A-19 /MH-32-A-18 | **MH-32-A-19 /MH-32-A-18** |  | 2026-09-22 | 2026-11-07 |  |  |
| A74230 |  | Excavation | 10d | 2026-09-22 | 2026-10-03 | A74280, A1080 | 44d |
| A74240 |  | Pipe Laying | 10d | 2026-10-04 | 2026-10-14 | A74230, A11160 | 44d |
| A74250 |  | Install Manhole | 10d | 2026-10-04 | 2026-10-14 | A74230, A10240 | 54d |
| A74260 |  | Testing & Inspection | 10d | 2026-10-15 | 2026-10-26 | A74240 | 44d |
| A74270 |  | Backfilling & Compaction | 10d | 2026-10-27 | 2026-11-07 | A74260, A74250, A74320 | 44d |
|  | MH-32-A-20 /MH-32-A-19 | **MH-32-A-20 /MH-32-A-19** |  | 2026-10-04 | 2026-11-18 |  |  |
| A74180 |  | Excavation | 10d | 2026-10-04 | 2026-10-14 | A74230, A1080 | 44d |
| A74190 |  | Pipe Laying | 10d | 2026-10-15 | 2026-10-26 | A74180, A11160 | 44d |
| A74200 |  | Install Manhole | 10d | 2026-10-15 | 2026-10-26 | A74180, A10240 | 54d |
| A74210 |  | Testing & Inspection | 10d | 2026-10-27 | 2026-11-07 | A74190 | 44d |
| A74220 |  | Backfilling & Compaction | 10d | 2026-11-08 | 2026-11-18 | A74210, A74200, A74270 | 44d |
|  | MH-32-A-21 /MH-32-A-20 | **MH-32-A-21 /MH-32-A-20** |  | 2026-10-15 | 2026-11-30 |  |  |
| A74130 |  | Excavation | 10d | 2026-10-15 | 2026-10-26 | A74180, A1080 | 44d |
| A74140 |  | Pipe Laying | 10d | 2026-10-27 | 2026-11-07 | A74130, A11160 | 44d |
| A74150 |  | Install Manhole | 10d | 2026-10-27 | 2026-11-07 | A74130, A10240 | 54d |
| A74160 |  | Testing & Inspection | 10d | 2026-11-08 | 2026-11-18 | A74140 | 44d |
| A74170 |  | Backfilling & Compaction | 10d | 2026-11-19 | 2026-11-30 | A74160, A74150, A74220 | 44d |
|  | MH-36-A-1 /MH-36 | **MH-36-A-1 /MH-36** |  | 2026-03-19 | 2026-05-18 |  |  |
| A74580 |  | Excavation | 10d | 2026-03-19 | 2026-03-30 | A56600, A1070, A1080, A1090, A1100, A1110, A1080 FF, A10940, A11120, A11130, A11160 | 44d |
| A74590 |  | Pipe Laying | 10d | 2026-03-31 | 2026-04-11 | A74580, A11160 | 118d |
| A74610 |  | Testing & Inspection | 10d | 2026-04-12 | 2026-04-22 | A74590 | 118d |
| A74600 |  | Install Manhole | 10d | 2026-04-26 | 2026-05-06 | A74580, A10240 | 106d |
| A74620 |  | Backfilling & Compaction | 10d | 2026-05-07 | 2026-05-18 | A74610, A74600 | 106d |
|  | MH-36-A-10 /MH-36-A-9 | **MH-36-A-10 /MH-36-A-9** |  | 2026-07-02 | 2026-08-19 |  |  |
| A75030 |  | Excavation | 10d | 2026-07-02 | 2026-07-13 | A74980, A1080 | 44d |
| A75040 |  | Pipe Laying | 10d | 2026-07-14 | 2026-07-25 | A75030, A11160 | 50d |
| A75050 |  | Install Manhole | 10d | 2026-07-14 | 2026-07-25 | A75030, A10240 | 60d |
| A75060 |  | Testing & Inspection | 10d | 2026-07-26 | 2026-08-05 | A75040 | 50d |
| A75070 |  | Backfilling & Compaction | 10d | 2026-08-09 | 2026-08-19 | A75060, A75050, A75020 | 48d |
|  | MH-36-A-11 /MH-36-A-10 | **MH-36-A-11 /MH-36-A-10** |  | 2026-07-14 | 2026-08-24 |  |  |
| A74530 |  | Excavation | 10d | 2026-07-14 | 2026-07-25 | A75030, A1080 | 44d |
| A74540 |  | Pipe Laying | 10d | 2026-07-26 | 2026-08-05 | A74530, A11160 | 50d |
| A74550 |  | Install Manhole | 10d | 2026-07-26 | 2026-08-05 | A74530, A10240 | 60d |
| A74560 |  | Testing & Inspection | 10d | 2026-08-06 | 2026-08-17 | A74540 | 50d |
| A74570 |  | Backfilling & Compaction | 4d | 2026-08-20 | 2026-08-24 | A74560, A74550, A75070 | 48d |
|  | MH-36-A-12 /MH-36-A-11 | **MH-36-A-12 /MH-36-A-11** |  | 2026-07-26 | 2026-09-09 |  |  |
| A74480 |  | Excavation | 10d | 2026-07-26 | 2026-08-05 | A74530, A1080 | 44d |
| A74490 |  | Pipe Laying | 10d | 2026-08-06 | 2026-08-17 | A74480, A11160 | 44d |
| A74500 |  | Install Manhole | 10d | 2026-08-06 | 2026-08-17 | A74480, A10240 | 54d |
| A74510 |  | Testing & Inspection | 10d | 2026-08-18 | 2026-08-29 | A74490 | 44d |

| ID | WBS | Task | Duration | Start | Finish | Predecessors | Total float |
| --- | --- | --- | --- | --- | --- | --- | --- |
| A74520 |  | Backfilling & Compaction | 10d | 2026-08-30 | 2026-09-09 | A74510, A74500, A74570 | 44d |
|  | MH-36-A-2 /MH-36-A-1 | **MH-36-A-2 /MH-36-A-1** |  | 2026-03-31 | 2026-05-18 |  |  |
| A74630 |  | Excavation | 10d | 2026-03-31 | 2026-04-11 | A74580, A1080 | 44d |
| A74640 |  | Pipe Laying | 10d | 2026-04-12 | 2026-04-22 | A74630, A11160 | 50d |
| A74660 |  | Testing & Inspection | 10d | 2026-04-23 | 2026-05-04 | A74640 | 50d |
| A74650 |  | Install Manhole | 10d | 2026-04-26 | 2026-05-06 | A74630, A10240 | 48d |
| A74670 |  | Backfilling & Compaction | 10d | 2026-05-07 | 2026-05-18 | A74660, A74650 | 48d |
|  | MH-36-A-3 /MH-36-A-2 | **MH-36-A-3 /MH-36-A-2** |  | 2026-04-12 | 2026-05-30 |  |  |
| A74680 |  | Excavation | 10d | 2026-04-12 | 2026-04-22 | A74630, A1080 | 44d |
| A74690 |  | Pipe Laying | 10d | 2026-04-23 | 2026-05-04 | A74680, A11160 | 50d |
| A74700 |  | Install Manhole | 10d | 2026-04-26 | 2026-05-06 | A74680, A10240 | 58d |
| A74710 |  | Testing & Inspection | 10d | 2026-05-05 | 2026-05-16 | A74690 | 50d |
| A74720 |  | Backfilling & Compaction | 10d | 2026-05-19 | 2026-05-30 | A74710, A74700, A74670 | 48d |
|  | MH-36-A-4 /MH-36-A-3 | **MH-36-A-4 /MH-36-A-3** |  | 2026-04-23 | 2026-06-10 |  |  |
| A74730 |  | Excavation | 10d | 2026-04-23 | 2026-05-04 | A74680, A1080 | 44d |
| A74740 |  | Pipe Laying | 10d | 2026-05-05 | 2026-05-16 | A74730, A11160 | 50d |
| A74750 |  | Install Manhole | 10d | 2026-05-05 | 2026-05-16 | A74730, A10240 | 60d |
| A74760 |  | Testing & Inspection | 10d | 2026-05-17 | 2026-05-27 | A74740 | 50d |
| A74770 |  | Backfilling & Compaction | 10d | 2026-05-31 | 2026-06-10 | A74760, A74750, A74720 | 48d |
|  | MH-36-A-5 /MH-36-A-4 | **MH-36-A-5 /MH-36-A-4** |  | 2026-05-05 | 2026-06-22 |  |  |
| A74780 |  | Excavation | 10d | 2026-05-05 | 2026-05-16 | A74730, A1080 | 44d |
| A74790 |  | Pipe Laying | 10d | 2026-05-17 | 2026-05-27 | A74780, A11160 | 50d |
| A74800 |  | Install Manhole | 10d | 2026-05-17 | 2026-05-27 | A74780, A10240 | 60d |
| A74810 |  | Testing & Inspection | 10d | 2026-05-28 | 2026-06-08 | A74790 | 50d |
| A74820 |  | Backfilling & Compaction | 10d | 2026-06-11 | 2026-06-22 | A74810, A74800, A74770 | 48d |
|  | MH-36-A-6 /MH-36-A-5 | **MH-36-A-6 /MH-36-A-5** |  | 2026-05-17 | 2026-07-04 |  |  |
| A74830 |  | Excavation | 10d | 2026-05-17 | 2026-05-27 | A74780, A1080 | 44d |
| A74840 |  | Pipe Laying | 10d | 2026-05-28 | 2026-06-08 | A74830, A11160 | 50d |
| A74850 |  | Install Manhole | 10d | 2026-05-28 | 2026-06-08 | A74830, A10240 | 60d |
| A74860 |  | Testing & Inspection | 10d | 2026-06-09 | 2026-06-20 | A74840 | 50d |
| A74870 |  | Backfilling & Compaction | 10d | 2026-06-23 | 2026-07-04 | A74860, A74850, A74820 | 48d |
|  | MH-36-A-7 /MH-36-A-6 | **MH-36-A-7 /MH-36-A-6** |  | 2026-05-28 | 2026-07-15 |  |  |
| A74880 |  | Excavation | 10d | 2026-05-28 | 2026-06-08 | A74830, A1080 | 44d |
| A74890 |  | Pipe Laying | 10d | 2026-06-09 | 2026-06-20 | A74880, A11160 | 50d |
| A74900 |  | Install Manhole | 10d | 2026-06-09 | 2026-06-20 | A74880, A10240 | 60d |
| A74910 |  | Testing & Inspection | 10d | 2026-06-21 | 2026-07-01 | A74890 | 50d |
| A74920 |  | Backfilling & Compaction | 10d | 2026-07-05 | 2026-07-15 | A74910, A74900, A74870 | 48d |
|  | MH-36-A-8 /MH-36-A-7 | **MH-36-A-8 /MH-36-A-7** |  | 2026-06-09 | 2026-07-27 |  |  |
| A74930 |  | Excavation | 10d | 2026-06-09 | 2026-06-20 | A74880, A1080 | 44d |
| A74940 |  | Pipe Laying | 10d | 2026-06-21 | 2026-07-01 | A74930, A11160 | 50d |
| A74950 |  | Install Manhole | 10d | 2026-06-21 | 2026-07-01 | A74930, A10240 | 60d |
| A74960 |  | Testing & Inspection | 10d | 2026-07-02 | 2026-07-13 | A74940 | 50d |
| A74970 |  | Backfilling & Compaction | 10d | 2026-07-16 | 2026-07-27 | A74960, A74950, A74920 | 48d |
|  | MH-36-A-9 /MH-36-A-8 | **MH-36-A-9 /MH-36-A-8** |  | 2026-06-21 | 2026-08-08 |  |  |
| A74980 |  | Excavation | 10d | 2026-06-21 | 2026-07-01 | A74930, A1080 | 44d |
| A74990 |  | Pipe Laying | 10d | 2026-07-02 | 2026-07-13 | A74980, A11160 | 50d |
| A75000 |  | Install Manhole | 10d | 2026-07-02 | 2026-07-13 | A74980, A10240 | 60d |
| A75010 |  | Testing & Inspection | 10d | 2026-07-14 | 2026-07-25 | A74990 | 50d |
| A75020 |  | Backfilling & Compaction | 10d | 2026-07-28 | 2026-08-08 | A75010, A75000, A74970 | 48d |
|  | LR 02 | **LR 02** |  | 2026-03-10 | 2027-01-04 |  |  |
|  | MH-32-01 /MH-32A | **MH-32-01 /MH-32A** |  | 2026-03-10 | 2026-05-04 |  |  |
| A74080 |  | Excavation | 10d | 2026-03-10 | 2026-03-21 | A59200, A59210, A1080 | 55d |
| A74090 |  | Pipe Laying | 4d | 2026-03-22 | 2026-03-25 | A74080, A11160 | 55d |
| A74110 |  | Testing & Inspection | 10d | 2026-03-26 | 2026-04-06 | A74090 | 55d |
| A74100 |  | Install Manhole | 4d | 2026-04-26 | 2026-04-29 | A74080, A10240 | 35d |
| A74120 |  | Backfilling & Compaction | 4d | 2026-04-30 | 2026-05-04 | A74110, A74100 | 35d |
|  | MH-32-A-04 /MH-32A-03 | **MH-32-A-04 /MH-32A-03** |  | 2026-10-04 | 2026-10-21 |  |  |
| A73930 |  | Excavation | 4d | 2026-10-04 | 2026-10-07 | A73980, A1080 | 26d |
| A73940 |  | Pipe Laying | 4d | 2026-10-08 | 2026-10-12 | A73930, A11160 | 26d |
| A73950 |  | Install Manhole | 4d | 2026-10-08 | 2026-10-12 | A73930, A10240 | 30d |
| A73960 |  | Testing & Inspection | 4d | 2026-10-13 | 2026-10-17 | A73940 | 26d |
| A73970 |  | Backfilling & Compaction | 4d | 2026-10-18 | 2026-10-21 | A73960, A73950, A74020 | 26d |
|  | MH-32-A-05 /MH-32A-04 | **MH-32-A-05 /MH-32A-04** |  | 2026-10-08 | 2026-10-26 |  |  |
| A73880 |  | Excavation | 4d | 2026-10-08 | 2026-10-12 | A73930, A1080 | 26d |
| A73890 |  | Pipe Laying | 4d | 2026-10-13 | 2026-10-17 | A73880, A11160 | 26d |
| A73900 |  | Install Manhole | 4d | 2026-10-13 | 2026-10-17 | A73880, A10240 | 30d |
| A73910 |  | Testing & Inspection | 4d | 2026-10-18 | 2026-10-21 | A73890 | 26d |
| A73920 |  | Backfilling & Compaction | 4d | 2026-10-22 | 2026-10-26 | A73910, A73900, A73970 | 26d |
|  | MH-32-A-06 /MH-32A-05 | **MH-32-A-06 /MH-32A-05** |  | 2026-10-13 | 2026-10-31 |  |  |
| A73830 |  | Excavation | 4d | 2026-10-13 | 2026-10-17 | A73880, A1080 | 26d |

| ID | WBS | Task | Duration | Start | Finish | Predecessors | Total float |
| --- | --- | --- | --- | --- | --- | --- | --- |
| A73840 |  | Pipe Laying | 4d | 2026-10-18 | 2026-10-21 | A73830, A11160 | 26d |
| A73850 |  | Install Manhole | 4d | 2026-10-18 | 2026-10-21 | A73830, A10240 | 30d |
| A73860 |  | Testing & Inspection | 4d | 2026-10-22 | 2026-10-26 | A73840 | 26d |
| A73870 |  | Backfilling & Compaction | 4d | 2026-10-27 | 2026-10-31 | A73860, A73850, A73920 | 26d |
|  | MH-32-A-07 /MH-32A-06 | **MH-32-A-07 /MH-32A-06** |  | 2026-10-18 | 2026-11-04 |  |  |
| A73780 |  | Excavation | 4d | 2026-10-18 | 2026-10-21 | A73830, A1080 | 26d |
| A73790 |  | Pipe Laying | 4d | 2026-10-22 | 2026-10-26 | A73780, A11160 | 26d |
| A73800 |  | Install Manhole | 4d | 2026-10-22 | 2026-10-26 | A73780, A10240 | 30d |
| A73810 |  | Testing & Inspection | 4d | 2026-10-27 | 2026-10-31 | A73790 | 26d |
| A73820 |  | Backfilling & Compaction | 4d | 2026-11-01 | 2026-11-04 | A73810, A73800, A73870 | 26d |
|  | MH-32-A-08 /MH-32A-07 | **MH-32-A-08 /MH-32A-07** |  | 2026-10-22 | 2026-11-09 |  |  |
| A73730 |  | Excavation | 4d | 2026-10-22 | 2026-10-26 | A73780, A1080 | 26d |
| A73740 |  | Pipe Laying | 4d | 2026-10-27 | 2026-10-31 | A73730, A11160 | 26d |
| A73750 |  | Install Manhole | 4d | 2026-10-27 | 2026-10-31 | A73730, A10240 | 30d |
| A73760 |  | Testing & Inspection | 4d | 2026-11-01 | 2026-11-04 | A73740 | 26d |
| A73770 |  | Backfilling & Compaction | 4d | 2026-11-05 | 2026-11-09 | A73760, A73750, A73820 | 26d |
|  | MH-32-A-09 /MH-32A-08 | **MH-32-A-09 /MH-32A-08** |  | 2026-10-27 | 2026-11-14 |  |  |
| A73680 |  | Excavation | 4d | 2026-10-27 | 2026-10-31 | A73730, A1080 | 26d |
| A73690 |  | Pipe Laying | 4d | 2026-11-01 | 2026-11-04 | A73680, A11160 | 26d |
| A73700 |  | Install Manhole | 4d | 2026-11-01 | 2026-11-04 | A73680, A10240 | 30d |
| A73710 |  | Testing & Inspection | 4d | 2026-11-05 | 2026-11-09 | A73690 | 26d |
| A73720 |  | Backfilling & Compaction | 4d | 2026-11-10 | 2026-11-14 | A73710, A73700, A73770 | 26d |
|  | MH-32-A-10 /MH-32A-09 | **MH-32-A-10 /MH-32A-09** |  | 2026-11-01 | 2026-11-18 |  |  |
| A73630 |  | Excavation | 4d | 2026-11-01 | 2026-11-04 | A73680, A1080 | 26d |
| A73640 |  | Pipe Laying | 4d | 2026-11-05 | 2026-11-09 | A73630, A11160 | 26d |
| A73650 |  | Install Manhole | 4d | 2026-11-05 | 2026-11-09 | A73630, A10240 | 30d |
| A73660 |  | Testing & Inspection | 4d | 2026-11-10 | 2026-11-14 | A73640 | 26d |
| A73670 |  | Backfilling & Compaction | 4d | 2026-11-15 | 2026-11-18 | A73660, A73650, A73720 | 26d |
|  | MH-32-A-11 /MH-32A-10 | **MH-32-A-11 /MH-32A-10** |  | 2026-11-05 | 2026-11-23 |  |  |
| A73580 |  | Excavation | 4d | 2026-11-05 | 2026-11-09 | A73630, A1080 | 26d |
| A73590 |  | Pipe Laying | 4d | 2026-11-10 | 2026-11-14 | A73580, A11160 | 26d |
| A73600 |  | Install Manhole | 4d | 2026-11-10 | 2026-11-14 | A73580, A10240 | 30d |
| A73610 |  | Testing & Inspection | 4d | 2026-11-15 | 2026-11-18 | A73590 | 26d |
| A73620 |  | Backfilling & Compaction | 4d | 2026-11-19 | 2026-11-23 | A73610, A73600, A73670 | 26d |
|  | MH-32-A-12 /MH-32-A-11 | **MH-32-A-12 /MH-32-A-11** |  | 2026-11-10 | 2026-11-28 |  |  |
| A73530 |  | Excavation | 4d | 2026-11-10 | 2026-11-14 | A73580, A1080 | 26d |
| A73540 |  | Pipe Laying | 4d | 2026-11-15 | 2026-11-18 | A73530, A11160 | 26d |
| A73550 |  | Install Manhole | 4d | 2026-11-15 | 2026-11-18 | A73530, A10240 | 30d |
| A73560 |  | Testing & Inspection | 4d | 2026-11-19 | 2026-11-23 | A73540 | 26d |
| A73570 |  | Backfilling & Compaction | 4d | 2026-11-24 | 2026-11-28 | A73560, A73550, A73620 | 26d |
|  | MH-32-A-12-1 /MH-32-A-12 | **MH-32-A-12-1 /MH-32-A-12** |  | 2026-11-15 | 2026-12-02 |  |  |
| A73480 |  | Excavation | 4d | 2026-11-15 | 2026-11-18 | A73530, A1080 | 26d |
| A73490 |  | Pipe Laying | 4d | 2026-11-19 | 2026-11-23 | A73480, A11160 | 26d |
| A73500 |  | Install Manhole | 4d | 2026-11-19 | 2026-11-23 | A73480, A10240 | 30d |
| A73510 |  | Testing & Inspection | 4d | 2026-11-24 | 2026-11-28 | A73490 | 26d |
| A73520 |  | Backfilling & Compaction | 4d | 2026-11-29 | 2026-12-02 | A73510, A73500, A73570 | 26d |
|  | MH-32-A-12-2 /MH-32-A-12-1 | **MH-32-A-12-2 /MH-32-A-12-1** |  | 2026-11-19 | 2026-12-07 |  |  |
| A73430 |  | Excavation | 4d | 2026-11-19 | 2026-11-23 | A73480, A1080 | 26d |
| A73440 |  | Pipe Laying | 4d | 2026-11-24 | 2026-11-28 | A73430, A11160 | 26d |
| A73450 |  | Install Manhole | 4d | 2026-11-24 | 2026-11-28 | A73430, A10240 | 30d |
| A73460 |  | Testing & Inspection | 4d | 2026-11-29 | 2026-12-02 | A73440 | 26d |
| A73470 |  | Backfilling & Compaction | 4d | 2026-12-03 | 2026-12-07 | A73460, A73450, A73520 | 26d |
|  | MH-32-A-12-3 /MH-32-A-12-2 | **MH-32-A-12-3 /MH-32-A-12-2** |  | 2026-11-24 | 2026-12-12 |  |  |
| A73380 |  | Excavation | 4d | 2026-11-24 | 2026-11-28 | A73430, A1080 | 26d |
| A73390 |  | Pipe Laying | 4d | 2026-11-29 | 2026-12-02 | A73380, A11160 | 26d |
| A73400 |  | Install Manhole | 4d | 2026-11-29 | 2026-12-02 | A73380, A10240 | 30d |
| A73410 |  | Testing & Inspection | 4d | 2026-12-03 | 2026-12-07 | A73390 | 26d |
| A73420 |  | Backfilling & Compaction | 4d | 2026-12-08 | 2026-12-12 | A73410, A73400, A73470 | 26d |
|  | MH-32-A-12-4 /MH-32-A-12-3 | **MH-32-A-12-4 /MH-32-A-12-3** |  | 2026-11-29 | 2026-12-16 |  |  |
| A73330 |  | Excavation | 4d | 2026-11-29 | 2026-12-02 | A73380, A1080 | 26d |
| A73340 |  | Pipe Laying | 4d | 2026-12-03 | 2026-12-07 | A73330, A11160 | 26d |
| A73350 |  | Install Manhole | 4d | 2026-12-03 | 2026-12-07 | A73330, A10240 | 30d |
| A73360 |  | Testing & Inspection | 4d | 2026-12-08 | 2026-12-12 | A73340 | 26d |
| A73370 |  | Backfilling & Compaction | 4d | 2026-12-13 | 2026-12-16 | A73360, A73350, A73420 | 26d |
|  | MH-32-A-12-5 /MH-32-A-12-6 | **MH-32-A-12-5 /MH-32-A-12-6** |  | 2026-12-03 | 2026-12-21 |  |  |
| A73280 |  | Excavation | 4d | 2026-12-03 | 2026-12-07 | A73330, A1080 | 26d |
| A73290 |  | Pipe Laying | 4d | 2026-12-08 | 2026-12-12 | A73280, A11160 | 26d |
| A73300 |  | Install Manhole | 4d | 2026-12-08 | 2026-12-12 | A73280, A10240 | 30d |
| A73310 |  | Testing & Inspection | 4d | 2026-12-13 | 2026-12-16 | A73290 | 26d |
| A73320 |  | Backfilling & Compaction | 4d | 2026-12-17 | 2026-12-21 | A73310, A73300, A73370 | 26d |

| ID | WBS | Task | Duration | Start | Finish | Predecessors | Total float |
| --- | --- | --- | --- | --- | --- | --- | --- |
|  | MH-32-A-12-6 /MH-32-A-12-5 | **MH-32-A-12-6 /MH-32-A-12-5** |  | 2026-12-08 | 2026-12-26 |  |  |
| A73230 |  | Excavation | 4d | 2026-12-08 | 2026-12-12 | A73280, A1080 | 26d |
| A73240 |  | Pipe Laying | 4d | 2026-12-13 | 2026-12-16 | A73230, A11160 | 26d |
| A73250 |  | Install Manhole | 4d | 2026-12-13 | 2026-12-16 | A73230, A10240 | 30d |
| A73260 |  | Testing & Inspection | 4d | 2026-12-17 | 2026-12-21 | A73240 | 26d |
| A73270 |  | Backfilling & Compaction | 4d | 2026-12-22 | 2026-12-26 | A73260, A73250, A73320 | 26d |
|  | MH-32-A-12-7 /MH-32-A-12-6 | **MH-32-A-12-7 /MH-32-A-12-6** |  | 2026-12-13 | 2026-12-30 |  |  |
| A73180 |  | Excavation | 4d | 2026-12-13 | 2026-12-16 | A73230, A1080 | 26d |
| A73190 |  | Pipe Laying | 4d | 2026-12-17 | 2026-12-21 | A73180, A11160 | 26d |
| A73200 |  | Install Manhole | 4d | 2026-12-17 | 2026-12-21 | A73180, A10240 | 30d |
| A73210 |  | Testing & Inspection | 4d | 2026-12-22 | 2026-12-26 | A73190 | 26d |
| A73220 |  | Backfilling & Compaction | 4d | 2026-12-27 | 2026-12-30 | A73210, A73200, A73270 | 26d |
|  | MH-32-A-12-8 /MH-32-A-12-7 | **MH-32-A-12-8 /MH-32-A-12-7** |  | 2026-12-17 | 2027-01-04 |  |  |
| A73130 |  | Excavation | 4d | 2026-12-17 | 2026-12-21 | A73180, A1080 | 26d |
| A73140 |  | Pipe Laying | 4d | 2026-12-22 | 2026-12-26 | A73130, A11160 | 26d |
| A73150 |  | Install Manhole | 4d | 2026-12-22 | 2026-12-26 | A73130, A10240 | 30d |
| A73160 |  | Testing & Inspection | 4d | 2026-12-27 | 2026-12-30 | A73140 | 26d |
| A73170 |  | Backfilling & Compaction | 4d | 2026-12-31 | 2027-01-04 | A73160, A73150, A73220 | 26d |
|  | MH-32A-02 /MH-32A-01 | **MH-32A-02 /MH-32A-01** |  | 2026-09-24 | 2026-10-10 |  |  |
| A74030 |  | Excavation | 4d | 2026-09-24 | 2026-09-28 | A74080, A1080, A57230, A58910 | 26d |
| A74040 |  | Pipe Laying | 4d | 2026-09-29 | 2026-10-03 | A74030, A11160 | 28d |
| A74050 |  | Install Manhole | 4d | 2026-09-29 | 2026-10-03 | A74030, A10240 | 30d |
| A74060 |  | Testing & Inspection | 2d | 2026-10-04 | 2026-10-05 | A74040 | 28d |
| A74070 |  | Backfilling & Compaction | 4d | 2026-10-06 | 2026-10-10 | A74060, A74050 | 28d |
|  | MH-32A-03 /MH-32A-02 | **MH-32A-03 /MH-32A-02** |  | 2026-09-29 | 2026-10-17 |  |  |
| A73980 |  | Excavation | 4d | 2026-09-29 | 2026-10-03 | A74030, A1080 | 26d |
| A73990 |  | Pipe Laying | 4d | 2026-10-04 | 2026-10-07 | A73980, A11160 | 26d |
| A74000 |  | Install Manhole | 4d | 2026-10-04 | 2026-10-07 | A73980, A10240 | 30d |
| A74010 |  | Testing & Inspection | 4d | 2026-10-08 | 2026-10-12 | A73990 | 26d |
| A74020 |  | Backfilling & Compaction | 4d | 2026-10-13 | 2026-10-17 | A74010, A74000, A74070 | 26d |
|  | LR 03 | **LR 03** |  | 2026-09-24 | 2027-01-03 |  |  |
|  | MH-32-A-21 /MH-32-A-21-1 | **MH-32-A-21 /MH-32-A-21-1** |  | 2026-12-21 | 2027-01-03 |  |  |
| A71780 |  | Excavation | 3d | 2026-12-21 | 2026-12-23 | A71830, A1080 | 15d |
| A71790 |  | Pipe Laying | 3d | 2026-12-24 | 2026-12-27 | A71780, A11160 | 15d |
| A71800 |  | Install Manhole | 3d | 2026-12-24 | 2026-12-27 | A71780 | 18d |
| A71810 |  | Testing & Inspection | 3d | 2026-12-28 | 2026-12-30 | A71790 | 15d |
| A71820 |  | Backfilling & Compaction | 3d | 2026-12-31 | 2027-01-03 | A71810, A71800, A71870 | 15d |
|  | MH-32-A-22 /MH-32-A-21 | **MH-32-A-22 /MH-32-A-21** |  | 2026-12-17 | 2026-12-30 |  |  |
| A71830 |  | Excavation | 3d | 2026-12-17 | 2026-12-20 | A71880, A1080 | 15d |
| A71840 |  | Pipe Laying | 3d | 2026-12-21 | 2026-12-23 | A71830, A11160 | 15d |
| A71850 |  | Install Manhole | 3d | 2026-12-21 | 2026-12-23 | A71830 | 18d |
| A71860 |  | Testing & Inspection | 3d | 2026-12-24 | 2026-12-27 | A71840 | 15d |
| A71870 |  | Backfilling & Compaction | 3d | 2026-12-28 | 2026-12-30 | A71860, A71850, A71920 | 15d |
|  | MH-32-A-23 /MH-32-A-22 | **MH-32-A-23 /MH-32-A-22** |  | 2026-12-14 | 2026-12-27 |  |  |
| A71880 |  | Excavation | 3d | 2026-12-14 | 2026-12-16 | A71930, A1080 | 15d |
| A71890 |  | Pipe Laying | 3d | 2026-12-17 | 2026-12-20 | A71880, A11160 | 15d |
| A71900 |  | Install Manhole | 3d | 2026-12-17 | 2026-12-20 | A71880 | 18d |
| A71910 |  | Testing & Inspection | 3d | 2026-12-21 | 2026-12-23 | A71890 | 15d |
| A71920 |  | Backfilling & Compaction | 3d | 2026-12-24 | 2026-12-27 | A71910, A71900, A71970 | 15d |
|  | MH-32-A-24 /MH-32-A-23 | **MH-32-A-24 /MH-32-A-23** |  | 2026-12-10 | 2026-12-23 |  |  |
| A71930 |  | Excavation | 3d | 2026-12-10 | 2026-12-13 | A71980, A1080 | 15d |
| A71940 |  | Pipe Laying | 3d | 2026-12-14 | 2026-12-16 | A71930, A11160 | 15d |
| A71950 |  | Install Manhole | 3d | 2026-12-14 | 2026-12-16 | A71930 | 18d |
| A71960 |  | Testing & Inspection | 3d | 2026-12-17 | 2026-12-20 | A71940 | 15d |
| A71970 |  | Backfilling & Compaction | 3d | 2026-12-21 | 2026-12-23 | A71960, A71950, A72020 | 15d |
|  | MH-32-A-25 /MH-32-A-24 | **MH-32-A-25 /MH-32-A-24** |  | 2026-12-07 | 2026-12-20 |  |  |
| A71980 |  | Excavation | 3d | 2026-12-07 | 2026-12-09 | A72030, A1080 | 15d |
| A71990 |  | Pipe Laying | 3d | 2026-12-10 | 2026-12-13 | A71980, A11160 | 15d |
| A72000 |  | Install Manhole | 3d | 2026-12-10 | 2026-12-13 | A71980 | 18d |
| A72010 |  | Testing & Inspection | 3d | 2026-12-14 | 2026-12-16 | A71990 | 15d |
| A72020 |  | Backfilling & Compaction | 3d | 2026-12-17 | 2026-12-20 | A72010, A72000, A72070 | 15d |
|  | MH-32-A-26 /MH-32-A-25 | **MH-32-A-26 /MH-32-A-25** |  | 2026-12-03 | 2026-12-16 |  |  |
| A72030 |  | Excavation | 3d | 2026-12-03 | 2026-12-06 | A72080, A1080 | 15d |
| A72040 |  | Pipe Laying | 3d | 2026-12-07 | 2026-12-09 | A72030, A11160 | 15d |
| A72050 |  | Install Manhole | 3d | 2026-12-07 | 2026-12-09 | A72030 | 18d |
| A72060 |  | Testing & Inspection | 3d | 2026-12-10 | 2026-12-13 | A72040 | 15d |
| A72070 |  | Backfilling & Compaction | 3d | 2026-12-14 | 2026-12-16 | A72060, A72050, A72120 | 15d |
|  | MH-32-A-27 /MH-32-A-26 | **MH-32-A-27 /MH-32-A-26** |  | 2026-11-30 | 2026-12-13 |  |  |
| A72080 |  | Excavation | 3d | 2026-11-30 | 2026-12-02 | A72130, A1080 | 15d |
| A72090 |  | Pipe Laying | 3d | 2026-12-03 | 2026-12-06 | A72080, A11160 | 15d |

| ID | WBS | Task | Duration | Start | Finish | Predecessors | Total float |
| --- | --- | --- | --- | --- | --- | --- | --- |
| A72100 |  | Install Manhole | 3d | 2026-12-03 | 2026-12-06 | A72080 | 18d |
| A72110 |  | Testing & Inspection | 3d | 2026-12-07 | 2026-12-09 | A72090 | 15d |
| A72120 |  | Backfilling & Compaction | 3d | 2026-12-10 | 2026-12-13 | A72110, A72100, A72170 | 15d |
|  | MH-A45 /MH-A44 | **MH-A45 /MH-A44** |  | 2026-09-24 | 2026-10-03 |  |  |
| A72930 |  | Excavation | 2d | 2026-09-24 | 2026-09-26 | A59260, A59270, A1080, A58770, A58910 | 5d |
| A72940 |  | Pipe Laying | 2d | 2026-09-27 | 2026-09-28 | A72930, A11160 | 5d |
| A72950 |  | Install Manhole | 2d | 2026-09-27 | 2026-09-28 | A72930 | 7d |
| A72960 |  | Testing & Inspection | 2d | 2026-09-29 | 2026-09-30 | A72940 | 5d |
| A72970 |  | Backfilling & Compaction | 2d | 2026-10-01 | 2026-10-03 | A72960, A72950 | 5d |
|  | MH-A46 /MH-A45 | **MH-A46 /MH-A45** |  | 2026-09-27 | 2026-10-05 |  |  |
| A72980 |  | Excavation | 2d | 2026-09-27 | 2026-09-28 | A72930, A1080 | 15d |
| A72990 |  | Pipe Laying | 2d | 2026-09-29 | 2026-09-30 | A72980, A11160 | 18d |
| A73000 |  | Install Manhole | 2d | 2026-09-29 | 2026-09-30 | A72980 | 20d |
| A73010 |  | Testing & Inspection | 2d | 2026-10-01 | 2026-10-03 | A72990 | 18d |
| A73020 |  | Backfilling & Compaction | 2d | 2026-10-04 | 2026-10-05 | A73010, A73000 | 18d |
|  | MH-A47 /MH-A46 | **MH-A47 /MH-A46** |  | 2026-09-29 | 2026-10-07 |  |  |
| A73030 |  | Excavation | 2d | 2026-09-29 | 2026-09-30 | A72980, A1080 | 15d |
| A73040 |  | Pipe Laying | 2d | 2026-10-01 | 2026-10-03 | A73030, A11160 | 18d |
| A73050 |  | Install Manhole | 2d | 2026-10-01 | 2026-10-03 | A73030 | 20d |
| A73060 |  | Testing & Inspection | 2d | 2026-10-04 | 2026-10-05 | A73040 | 18d |
| A73070 |  | Backfilling & Compaction | 2d | 2026-10-06 | 2026-10-07 | A73060, A73050, A73020 | 18d |
|  | MH-A48 /MH-A47 | **MH-A48 /MH-A47** |  | 2026-10-01 | 2026-10-14 |  |  |
| A73080 |  | Excavation | 3d | 2026-10-01 | 2026-10-04 | A73030, A1080 | 15d |
| A73090 |  | Pipe Laying | 3d | 2026-10-05 | 2026-10-07 | A73080, A11160 | 15d |
| A73100 |  | Install Manhole | 3d | 2026-10-05 | 2026-10-07 | A73080 | 18d |
| A73110 |  | Testing & Inspection | 3d | 2026-10-08 | 2026-10-11 | A73090 | 15d |
| A73120 |  | Backfilling & Compaction | 3d | 2026-10-12 | 2026-10-14 | A73110, A73100, A73070 | 15d |
|  | MH-A49 /MH-A48 | **MH-A49 /MH-A48** |  | 2026-10-05 | 2026-10-18 |  |  |
| A72880 |  | Excavation | 3d | 2026-10-05 | 2026-10-07 | A73080, A1080 | 15d |
| A72890 |  | Pipe Laying | 3d | 2026-10-08 | 2026-10-11 | A72880, A11160 | 15d |
| A72900 |  | Install Manhole | 3d | 2026-10-08 | 2026-10-11 | A72880 | 18d |
| A72910 |  | Testing & Inspection | 3d | 2026-10-12 | 2026-10-14 | A72890 | 15d |
| A72920 |  | Backfilling & Compaction | 3d | 2026-10-15 | 2026-10-18 | A72910, A72900, A73120 | 15d |
|  | MH-A50 /MH-A49 | **MH-A50 /MH-A49** |  | 2026-10-08 | 2026-10-21 |  |  |
| A72830 |  | Excavation | 3d | 2026-10-08 | 2026-10-11 | A72880, A1080 | 15d |
| A72840 |  | Pipe Laying | 3d | 2026-10-12 | 2026-10-14 | A72830, A11160 | 15d |
| A72850 |  | Install Manhole | 3d | 2026-10-12 | 2026-10-14 | A72830 | 18d |
| A72860 |  | Testing & Inspection | 3d | 2026-10-15 | 2026-10-18 | A72840 | 15d |
| A72870 |  | Backfilling & Compaction | 3d | 2026-10-19 | 2026-10-21 | A72860, A72850, A72920 | 15d |
|  | MH-A51 /MH-A50 | **MH-A51 /MH-A50** |  | 2026-10-12 | 2026-10-25 |  |  |
| A72780 |  | Excavation | 3d | 2026-10-12 | 2026-10-14 | A72830, A1080 | 15d |
| A72790 |  | Pipe Laying | 3d | 2026-10-15 | 2026-10-18 | A72780, A11160 | 15d |
| A72800 |  | Install Manhole | 3d | 2026-10-15 | 2026-10-18 | A72780 | 18d |
| A72810 |  | Testing & Inspection | 3d | 2026-10-19 | 2026-10-21 | A72790 | 15d |
| A72820 |  | Backfilling & Compaction | 3d | 2026-10-22 | 2026-10-25 | A72810, A72800, A72870 | 15d |
|  | MH-A52 /MH-A51 | **MH-A52 /MH-A51** |  | 2026-10-15 | 2026-10-28 |  |  |
| A72730 |  | Excavation | 3d | 2026-10-15 | 2026-10-18 | A72780, A1080 | 15d |
| A72740 |  | Pipe Laying | 3d | 2026-10-19 | 2026-10-21 | A72730, A11160 | 15d |
| A72750 |  | Install Manhole | 3d | 2026-10-19 | 2026-10-21 | A72730 | 18d |
| A72760 |  | Testing & Inspection | 3d | 2026-10-22 | 2026-10-25 | A72740 | 15d |
| A72770 |  | Backfilling & Compaction | 3d | 2026-10-26 | 2026-10-28 | A72760, A72750, A72820 | 15d |
|  | MH-A53 /MH-A52 | **MH-A53 /MH-A52** |  | 2026-10-19 | 2026-11-01 |  |  |
| A72680 |  | Excavation | 3d | 2026-10-19 | 2026-10-21 | A72730, A1080 | 15d |
| A72690 |  | Pipe Laying | 3d | 2026-10-22 | 2026-10-25 | A72680, A11160 | 15d |
| A72700 |  | Install Manhole | 3d | 2026-10-22 | 2026-10-25 | A72680 | 18d |
| A72710 |  | Testing & Inspection | 3d | 2026-10-26 | 2026-10-28 | A72690 | 15d |
| A72720 |  | Backfilling & Compaction | 3d | 2026-10-29 | 2026-11-01 | A72710, A72700, A72770 | 15d |
|  | MH-A54 /MH-A53 | **MH-A54 /MH-A53** |  | 2026-10-22 | 2026-11-04 |  |  |
| A72630 |  | Excavation | 3d | 2026-10-22 | 2026-10-25 | A72680, A1080 | 15d |
| A72640 |  | Pipe Laying | 3d | 2026-10-26 | 2026-10-28 | A72630, A11160 | 15d |
| A72650 |  | Install Manhole | 3d | 2026-10-26 | 2026-10-28 | A72630 | 18d |
| A72660 |  | Testing & Inspection | 3d | 2026-10-29 | 2026-11-01 | A72640 | 15d |
| A72670 |  | Backfilling & Compaction | 3d | 2026-11-02 | 2026-11-04 | A72660, A72650, A72720 | 15d |
|  | MH-A55 /MH-A54 | **MH-A55 /MH-A54** |  | 2026-10-26 | 2026-11-08 |  |  |
| A72580 |  | Excavation | 3d | 2026-10-26 | 2026-10-28 | A72630, A1080 | 15d |
| A72590 |  | Pipe Laying | 3d | 2026-10-29 | 2026-11-01 | A72580, A11160 | 15d |
| A72600 |  | Install Manhole | 3d | 2026-10-29 | 2026-11-01 | A72580 | 18d |
| A72610 |  | Testing & Inspection | 3d | 2026-11-02 | 2026-11-04 | A72590 | 15d |
| A72620 |  | Backfilling & Compaction | 3d | 2026-11-05 | 2026-11-08 | A72610, A72600, A72670 | 15d |
|  | MH-A56 /MH-A55 | **MH-A56 /MH-A55** |  | 2026-10-29 | 2026-11-11 |  |  |

| ID | WBS | Task | Duration | Start | Finish | Predecessors | Total float |
| --- | --- | --- | --- | --- | --- | --- | --- |
| A72530 |  | Excavation | 3d | 2026-10-29 | 2026-11-01 | A72580, A1080 | 15d |
| A72540 |  | Pipe Laying | 3d | 2026-11-02 | 2026-11-04 | A72530, A11160 | 15d |
| A72550 |  | Install Manhole | 3d | 2026-11-02 | 2026-11-04 | A72530 | 18d |
| A72560 |  | Testing & Inspection | 3d | 2026-11-05 | 2026-11-08 | A72540 | 15d |
| A72570 |  | Backfilling & Compaction | 3d | 2026-11-09 | 2026-11-11 | A72560, A72550, A72620 | 15d |
|  | MH-A57 /MH-A56 | **MH-A57 /MH-A56** |  | 2026-11-02 | 2026-11-15 |  |  |
| A72480 |  | Excavation | 3d | 2026-11-02 | 2026-11-04 | A72530, A1080 | 15d |
| A72490 |  | Pipe Laying | 3d | 2026-11-05 | 2026-11-08 | A72480, A11160 | 15d |
| A72500 |  | Install Manhole | 3d | 2026-11-05 | 2026-11-08 | A72480 | 18d |
| A72510 |  | Testing & Inspection | 3d | 2026-11-09 | 2026-11-11 | A72490 | 15d |
| A72520 |  | Backfilling & Compaction | 3d | 2026-11-12 | 2026-11-15 | A72510, A72500, A72570 | 15d |
|  | MH-A58 /MH-A57 | **MH-A58 /MH-A57** |  | 2026-11-05 | 2026-11-18 |  |  |
| A72430 |  | Excavation | 3d | 2026-11-05 | 2026-11-08 | A72480, A1080 | 15d |
| A72440 |  | Pipe Laying | 3d | 2026-11-09 | 2026-11-11 | A72430, A11160 | 15d |
| A72450 |  | Install Manhole | 3d | 2026-11-09 | 2026-11-11 | A72430 | 18d |
| A72460 |  | Testing & Inspection | 3d | 2026-11-12 | 2026-11-15 | A72440 | 15d |
| A72470 |  | Backfilling & Compaction | 3d | 2026-11-16 | 2026-11-18 | A72460, A72450, A72520 | 15d |
|  | MH-A59 /MH-A58 | **MH-A59 /MH-A58** |  | 2026-11-09 | 2026-11-22 |  |  |
| A72380 |  | Excavation | 3d | 2026-11-09 | 2026-11-11 | A72430, A1080 | 15d |
| A72390 |  | Pipe Laying | 3d | 2026-11-12 | 2026-11-15 | A72380, A11160 | 15d |
| A72400 |  | Install Manhole | 3d | 2026-11-12 | 2026-11-15 | A72380 | 18d |
| A72410 |  | Testing & Inspection | 3d | 2026-11-16 | 2026-11-18 | A72390 | 15d |
| A72420 |  | Backfilling & Compaction | 3d | 2026-11-19 | 2026-11-22 | A72410, A72400, A72470 | 15d |
|  | MH-A60 /MH-A59 | **MH-A60 /MH-A59** |  | 2026-11-12 | 2026-11-25 |  |  |
| A72330 |  | Excavation | 3d | 2026-11-12 | 2026-11-15 | A72380, A1080 | 15d |
| A72340 |  | Pipe Laying | 3d | 2026-11-16 | 2026-11-18 | A72330, A11160 | 15d |
| A72350 |  | Install Manhole | 3d | 2026-11-16 | 2026-11-18 | A72330 | 18d |
| A72360 |  | Testing & Inspection | 3d | 2026-11-19 | 2026-11-22 | A72340 | 15d |
| A72370 |  | Backfilling & Compaction | 3d | 2026-11-23 | 2026-11-25 | A72360, A72350, A72420 | 15d |
|  | MH-A61 /MH-A60 | **MH-A61 /MH-A60** |  | 2026-11-16 | 2026-11-29 |  |  |
| A72280 |  | Excavation | 3d | 2026-11-16 | 2026-11-18 | A72330, A1080 | 15d |
| A72290 |  | Pipe Laying | 3d | 2026-11-19 | 2026-11-22 | A72280, A11160 | 15d |
| A72300 |  | Install Manhole | 3d | 2026-11-19 | 2026-11-22 | A72280 | 18d |
| A72310 |  | Testing & Inspection | 3d | 2026-11-23 | 2026-11-25 | A72290 | 15d |
| A72320 |  | Backfilling & Compaction | 3d | 2026-11-26 | 2026-11-29 | A72310, A72300, A72370 | 15d |
|  | MH-A62 /MH-A61 | **MH-A62 /MH-A61** |  | 2026-11-19 | 2026-12-02 |  |  |
| A72230 |  | Excavation | 3d | 2026-11-19 | 2026-11-22 | A72280, A1080 | 15d |
| A72240 |  | Pipe Laying | 3d | 2026-11-23 | 2026-11-25 | A72230, A11160 | 15d |
| A72250 |  | Install Manhole | 3d | 2026-11-23 | 2026-11-25 | A72230 | 18d |
| A72260 |  | Testing & Inspection | 3d | 2026-11-26 | 2026-11-29 | A72240 | 15d |
| A72270 |  | Backfilling & Compaction | 3d | 2026-11-30 | 2026-12-02 | A72260, A72250, A72320 | 15d |
|  | MH-A63 /MH-A62 | **MH-A63 /MH-A62** |  | 2026-11-23 | 2026-12-06 |  |  |
| A72180 |  | Excavation | 3d | 2026-11-23 | 2026-11-25 | A72230, A1080 | 15d |
| A72190 |  | Pipe Laying | 3d | 2026-11-26 | 2026-11-29 | A72180, A11160 | 15d |
| A72200 |  | Install Manhole | 3d | 2026-11-26 | 2026-11-29 | A72180 | 18d |
| A72210 |  | Testing & Inspection | 3d | 2026-11-30 | 2026-12-02 | A72190 | 15d |
| A72220 |  | Backfilling & Compaction | 3d | 2026-12-03 | 2026-12-06 | A72210, A72200, A72270 | 15d |
|  | MH-A64 /MH-A63 | **MH-A64 /MH-A63** |  | 2026-11-26 | 2026-12-09 |  |  |
| A72130 |  | Excavation | 3d | 2026-11-26 | 2026-11-29 | A72180, A1080 | 15d |
| A72140 |  | Pipe Laying | 3d | 2026-11-30 | 2026-12-02 | A72130, A11160 | 15d |
| A72150 |  | Install Manhole | 3d | 2026-11-30 | 2026-12-02 | A72130 | 18d |
| A72160 |  | Testing & Inspection | 3d | 2026-12-03 | 2026-12-06 | A72140 | 15d |
| A72170 |  | Backfilling & Compaction | 3d | 2026-12-07 | 2026-12-09 | A72160, A72150, A72220 | 15d |
|  | LR 04 | **LR 04** |  | 2026-03-28 | 2026-12-30 |  |  |
|  | MH-32-A-16-1 /MH-32-A-16 | **MH-32-A-16-1 /MH-32-A-16** |  | 2026-03-28 | 2026-04-28 |  |  |
| A71730 |  | Excavation | 4d | 2026-03-28 | 2026-03-31 | A59320, A59330, A1080 | 112d |
| A71740 |  | Pipe Laying | 4d | 2026-04-01 | 2026-04-05 | A71730, A11160 | 112d |
| A71750 |  | Install Manhole | 4d | 2026-04-01 | 2026-04-05 | A71730 | 122d |
| A71760 |  | Testing & Inspection | 10d | 2026-04-06 | 2026-04-16 | A71740 | 112d |
| A71770 |  | Backfilling & Compaction | 10d | 2026-04-18 | 2026-04-28 | A71760, A71750 | 112d |
|  | MH-32-A-16-2 /MH-32-A-16-1 | **MH-32-A-16-2 /MH-32-A-16-1** |  | 2026-09-24 | 2026-11-02 |  |  |
| A71680 |  | Excavation | 4d | 2026-09-24 | 2026-09-28 | A71730, A1080, A58910 | 18d |
| A71690 |  | Pipe Laying | 10d | 2026-09-29 | 2026-10-10 | A71680, A11160 | 18d |
| A71700 |  | Install Manhole | 10d | 2026-09-29 | 2026-10-10 | A71680 | 28d |
| A71710 |  | Testing & Inspection | 10d | 2026-10-11 | 2026-10-21 | A71690 | 18d |
| A71720 |  | Backfilling & Compaction | 10d | 2026-10-22 | 2026-11-02 | A71710, A71700, A71770 | 18d |
|  | MH-32-A-16-3 /MH-32-A-16-2 | **MH-32-A-16-3 /MH-32-A-16-2** |  | 2026-09-29 | 2026-11-14 |  |  |
| A71630 |  | Excavation | 10d | 2026-09-29 | 2026-10-10 | A71680, A1080 | 18d |
| A71640 |  | Pipe Laying | 10d | 2026-10-11 | 2026-10-21 | A71630, A11160 | 18d |
| A71650 |  | Install Manhole | 10d | 2026-10-11 | 2026-10-21 | A71630 | 28d |

| ID | WBS | Task | Duration | Start | Finish | Predecessors | Total float |
| --- | --- | --- | --- | --- | --- | --- | --- |
| A71660 |  | Testing & Inspection | 10d | 2026-10-22 | 2026-11-02 | A71640 | 18d |
| A71670 |  | Backfilling & Compaction | 10d | 2026-11-03 | 2026-11-14 | A71660, A71650, A71720 | 18d |
|  | MH-32-A-16-4 /MH-32-A-16-3 | **MH-32-A-16-4 /MH-32-A-16-3** |  | 2026-10-11 | 2026-11-25 |  |  |
| A71580 |  | Excavation | 10d | 2026-10-11 | 2026-10-21 | A71630, A1080 | 18d |
| A71590 |  | Pipe Laying | 10d | 2026-10-22 | 2026-11-02 | A71580, A11160 | 18d |
| A71600 |  | Install Manhole | 10d | 2026-10-22 | 2026-11-02 | A71580 | 28d |
| A71610 |  | Testing & Inspection | 10d | 2026-11-03 | 2026-11-14 | A71590 | 18d |
| A71620 |  | Backfilling & Compaction | 10d | 2026-11-15 | 2026-11-25 | A71610, A71600, A71670 | 18d |
|  | MH-32-A-16-5 /MH-32-A-16-4 | **MH-32-A-16-5 /MH-32-A-16-4** |  | 2026-10-22 | 2026-12-07 |  |  |
| A71530 |  | Excavation | 10d | 2026-10-22 | 2026-11-02 | A71580, A1080 | 18d |
| A71540 |  | Pipe Laying | 10d | 2026-11-03 | 2026-11-14 | A71530, A11160 | 18d |
| A71550 |  | Install Manhole | 10d | 2026-11-03 | 2026-11-14 | A71530 | 28d |
| A71560 |  | Testing & Inspection | 10d | 2026-11-15 | 2026-11-25 | A71540 | 18d |
| A71570 |  | Backfilling & Compaction | 10d | 2026-11-26 | 2026-12-07 | A71560, A71550, A71620 | 18d |
|  | MH-32-A-16-6 /MH-32-A-16-5 | **MH-32-A-16-6 /MH-32-A-16-5** |  | 2026-11-03 | 2026-12-19 |  |  |
| A71480 |  | Excavation | 10d | 2026-11-03 | 2026-11-14 | A71530, A1080 | 18d |
| A71490 |  | Pipe Laying | 10d | 2026-11-15 | 2026-11-25 | A71480, A11160 | 18d |
| A71500 |  | Install Manhole | 10d | 2026-11-15 | 2026-11-25 | A71480 | 28d |
| A71510 |  | Testing & Inspection | 10d | 2026-11-26 | 2026-12-07 | A71490 | 18d |
| A71520 |  | Backfilling & Compaction | 10d | 2026-12-08 | 2026-12-19 | A71510, A71500, A71570 | 18d |
|  | MH-32-A-16-7 /MH-32-A-16-6 | **MH-32-A-16-7 /MH-32-A-16-6** |  | 2026-11-15 | 2026-12-30 |  |  |
| A71430 |  | Excavation | 10d | 2026-11-15 | 2026-11-25 | A71480, A1080 | 18d |
| A71440 |  | Pipe Laying | 10d | 2026-11-26 | 2026-12-07 | A71430, A11160 | 18d |
| A71450 |  | Install Manhole | 10d | 2026-11-26 | 2026-12-07 | A71430 | 28d |
| A71460 |  | Testing & Inspection | 10d | 2026-12-08 | 2026-12-19 | A71440 | 18d |
| A71470 |  | Backfilling & Compaction | 10d | 2026-12-20 | 2026-12-30 | A71460, A71450, A71520 | 18d |
|  | LR 05 | **LR 05** |  | 2026-03-31 | 2027-01-16 |  |  |
|  | MH-36-A-13 /MH-36-A-15=2 | **MH-36-A-13 /MH-36-A-15=2** |  | 2026-11-12 | 2027-01-16 |  |  |
| A71180 |  | Excavation | 14d | 2026-11-12 | 2026-11-28 | A71230, A1080 | 4d |
| A71190 |  | Pipe Laying | 14d | 2026-11-29 | 2026-12-14 | A71180, A11160 | 4d |
| A71200 |  | Install Manhole | 14d | 2026-11-29 | 2026-12-14 | A71180 | 18d |
| A71210 |  | Testing & Inspection | 14d | 2026-12-15 | 2026-12-30 | A71190 | 4d |
| A71220 |  | Backfilling & Compaction | 14d | 2026-12-31 | 2027-01-16 | A71210, A71200, A71270 | 4d |
|  | MH-36-A-14 /MH-36-A-13 | **MH-36-A-14 /MH-36-A-13** |  | 2026-10-27 | 2026-12-30 |  |  |
| A71230 |  | Excavation | 14d | 2026-10-27 | 2026-11-11 | A71280, A1080 | 4d |
| A71240 |  | Pipe Laying | 14d | 2026-11-12 | 2026-11-28 | A71230, A11160 | 4d |
| A71250 |  | Install Manhole | 14d | 2026-11-12 | 2026-11-28 | A71230 | 18d |
| A71260 |  | Testing & Inspection | 14d | 2026-11-29 | 2026-12-14 | A71240 | 4d |
| A71270 |  | Backfilling & Compaction | 14d | 2026-12-15 | 2026-12-30 | A71260, A71250, A71320 | 4d |
|  | MH-36-A-15 /MH-36-A-14 | **MH-36-A-15 /MH-36-A-14** |  | 2026-10-11 | 2026-12-14 |  |  |
| A71280 |  | Excavation | 14d | 2026-10-11 | 2026-10-26 | A71330, A1080 | 4d |
| A71290 |  | Pipe Laying | 14d | 2026-10-27 | 2026-11-11 | A71280, A11160 | 4d |
| A71300 |  | Install Manhole | 14d | 2026-10-27 | 2026-11-11 | A71280 | 18d |
| A71310 |  | Testing & Inspection | 14d | 2026-11-12 | 2026-11-28 | A71290 | 4d |
| A71320 |  | Backfilling & Compaction | 14d | 2026-11-29 | 2026-12-14 | A71310, A71300, A71370 | 4d |
|  | MH-36-A-16 /MH-36-A-15 | **MH-36-A-16 /MH-36-A-15** |  | 2026-09-24 | 2026-11-28 |  |  |
| A71330 |  | Excavation | 14d | 2026-09-24 | 2026-10-10 | A71380, A1080, A58910 | 4d |
| A71340 |  | Pipe Laying | 14d | 2026-10-11 | 2026-10-26 | A71330, A11160 | 4d |
| A71350 |  | Install Manhole | 14d | 2026-10-11 | 2026-10-26 | A71330 | 18d |
| A71360 |  | Testing & Inspection | 14d | 2026-10-27 | 2026-11-11 | A71340 | 4d |
| A71370 |  | Backfilling & Compaction | 14d | 2026-11-12 | 2026-11-28 | A71360, A71350, A71420 | 4d |
|  | MH-36-A-17 /MH-36-A-16 | **MH-36-A-17 /MH-36-A-16** |  | 2026-03-31 | 2026-05-09 |  |  |
| A71380 |  | Excavation | 4d | 2026-03-31 | 2026-04-04 | A59350, A59360, A1080 | 89d |
| A71390 |  | Pipe Laying | 10d | 2026-04-05 | 2026-04-15 | A71380, A11160 | 89d |
| A71400 |  | Install Manhole | 10d | 2026-04-05 | 2026-04-15 | A71380 | 99d |
| A71410 |  | Testing & Inspection | 10d | 2026-04-16 | 2026-04-27 | A71390 | 89d |
| A71420 |  | Backfilling & Compaction | 10d | 2026-04-28 | 2026-05-09 | A71410, A71400 | 89d |
|  | LR 06 | **LR 06** |  | 2026-04-16 | 2026-12-26 |  |  |
|  | MH-26-10-1 /MH-26-10 | **MH-26-10-1 /MH-26-10** |  | 2026-04-16 | 2026-06-01 |  |  |
| A71130 |  | Excavation | 10d | 2026-04-16 | 2026-04-27 | A59380, A59390, A1080 | 2d |
| A71140 |  | Pipe Laying | 10d | 2026-04-28 | 2026-05-09 | A71130, A11160 | 2d |
| A71150 |  | Install Manhole | 10d | 2026-04-28 | 2026-05-09 | A71130 | 12d |
| A71160 |  | Testing & Inspection | 10d | 2026-05-10 | 2026-05-20 | A71140 | 2d |
| A71170 |  | Backfilling & Compaction | 10d | 2026-05-21 | 2026-06-01 | A71160, A71150 | 2d |
|  | MH-55-A-1 /MH-55-A | **MH-55-A-1 /MH-55-A** |  | 2026-11-10 | 2026-12-26 |  |  |
| A70880 |  | Excavation | 10d | 2026-11-10 | 2026-11-21 | A70930, A1080 | 22d |
| A70890 |  | Pipe Laying | 10d | 2026-11-22 | 2026-12-02 | A70880 | 22d |
| A70900 |  | Install Manhole | 10d | 2026-11-22 | 2026-12-02 | A70880 | 32d |
| A70910 |  | Testing & Inspection | 10d | 2026-12-03 | 2026-12-14 | A70890 | 22d |
| A70920 |  | Backfilling & Compaction | 10d | 2026-12-15 | 2026-12-26 | A70910, A70900, A70970 | 22d |

| ID | WBS | Task | Duration | Start | Finish | Predecessors | Total float |
| --- | --- | --- | --- | --- | --- | --- | --- |
|  | MH-55-A-2 /MH-55-A-1 | **MH-55-A-2 /MH-55-A-1** |  | 2026-10-29 | 2026-12-14 |  |  |
| A70930 |  | Excavation | 10d | 2026-10-29 | 2026-11-09 | A70980, A1080 | 22d |
| A70940 |  | Pipe Laying | 10d | 2026-11-10 | 2026-11-21 | A70930 | 22d |
| A70950 |  | Install Manhole | 10d | 2026-11-10 | 2026-11-21 | A70930 | 32d |
| A70960 |  | Testing & Inspection | 10d | 2026-11-22 | 2026-12-02 | A70940 | 22d |
| A70970 |  | Backfilling & Compaction | 10d | 2026-12-03 | 2026-12-14 | A70960, A70950, A71020 | 22d |
|  | MH-55-A-3 /MH-55-A-2 | **MH-55-A-3 /MH-55-A-2** |  | 2026-10-18 | 2026-12-02 |  |  |
| A70980 |  | Excavation | 10d | 2026-10-18 | 2026-10-28 | A71030, A1080 | 22d |
| A70990 |  | Pipe Laying | 10d | 2026-10-29 | 2026-11-09 | A70980, A11160 | 22d |
| A71000 |  | Install Manhole | 10d | 2026-10-29 | 2026-11-09 | A70980 | 32d |
| A71010 |  | Testing & Inspection | 10d | 2026-11-10 | 2026-11-21 | A70990 | 22d |
| A71020 |  | Backfilling & Compaction | 10d | 2026-11-22 | 2026-12-02 | A71010, A71000, A71070 | 22d |
|  | MH-55-A-4 /MH-55-A-3 | **MH-55-A-4 /MH-55-A-3** |  | 2026-10-06 | 2026-11-21 |  |  |
| A71030 |  | Excavation | 10d | 2026-10-06 | 2026-10-17 | A71080, A1080 | 22d |
| A71040 |  | Pipe Laying | 10d | 2026-10-18 | 2026-10-28 | A71030, A11160 | 22d |
| A71050 |  | Install Manhole | 10d | 2026-10-18 | 2026-10-28 | A71030 | 32d |
| A71060 |  | Testing & Inspection | 10d | 2026-10-29 | 2026-11-09 | A71040 | 22d |
| A71070 |  | Backfilling & Compaction | 10d | 2026-11-10 | 2026-11-21 | A71060, A71050, A71120 | 22d |
|  | MH-55-A-5 /MH-55-A-4 | **MH-55-A-5 /MH-55-A-4** |  | 2026-09-24 | 2026-11-09 |  |  |
| A71080 |  | Excavation | 10d | 2026-09-24 | 2026-10-05 | A71130, A1080, A58910 | 22d |
| A71090 |  | Pipe Laying | 10d | 2026-10-06 | 2026-10-17 | A71080, A11160 | 22d |
| A71100 |  | Install Manhole | 10d | 2026-10-06 | 2026-10-17 | A71080 | 32d |
| A71110 |  | Testing & Inspection | 10d | 2026-10-18 | 2026-10-28 | A71090 | 22d |
| A71120 |  | Backfilling & Compaction | 10d | 2026-10-29 | 2026-11-09 | A71110, A71100, A71170 | 22d |
|  | LR 07 | **LR 07** |  | 2026-04-22 | 2027-01-06 |  |  |
|  | MH-36-A-8-1 /MH-36-A-8 | **MH-36-A-8-1 /MH-36-A-8** |  | 2026-10-29 | 2026-12-14 |  |  |
| A70580 |  | Excavation | 10d | 2026-10-29 | 2026-11-09 | A1080, A70630 | 12d |
| A70590 |  | Pipe Laying | 10d | 2026-11-10 | 2026-11-21 | A70580 | 12d |
| A70600 |  | Install Manhole | 10d | 2026-11-10 | 2026-11-21 | A70580 | 22d |
| A70610 |  | Testing & Inspection | 10d | 2026-11-22 | 2026-12-02 | A70590 | 12d |
| A70620 |  | Backfilling & Compaction | 10d | 2026-12-03 | 2026-12-14 | A70610, A70600, A70670, A70630, A1080 | 12d |
|  | MH-36-A-8-2 /MH-36-A-8-1 | **MH-36-A-8-2 /MH-36-A-8-1** |  | 2026-10-18 | 2026-12-02 |  |  |
| A70630 |  | Excavation | 10d | 2026-10-18 | 2026-10-28 | A70830, A1080 | 12d |
| A70640 |  | Pipe Laying | 10d | 2026-10-29 | 2026-11-09 | A70630 | 12d |
| A70650 |  | Install Manhole | 10d | 2026-10-29 | 2026-11-09 | A70630 | 22d |
| A70660 |  | Testing & Inspection | 10d | 2026-11-10 | 2026-11-21 | A70640 | 12d |
| A70670 |  | Backfilling & Compaction | 10d | 2026-11-22 | 2026-12-02 | A70660, A70650, A70870 | 12d |
|  | MH-36-A-8-3 /MH-36-A-8-2 | **MH-36-A-8-3 /MH-36-A-8-2** |  | 2026-10-06 | 2026-11-21 |  |  |
| A70830 |  | Excavation | 10d | 2026-10-06 | 2026-10-17 | A70730, A1080 | 12d |
| A70840 |  | Pipe Laying | 10d | 2026-10-18 | 2026-10-28 | A70830 | 12d |
| A70850 |  | Install Manhole | 10d | 2026-10-18 | 2026-10-28 | A70830 | 22d |
| A70860 |  | Testing & Inspection | 10d | 2026-10-29 | 2026-11-09 | A70840 | 12d |
| A70870 |  | Backfilling & Compaction | 10d | 2026-11-10 | 2026-11-21 | A70860, A70850, A70770 | 12d |
|  | MH-36-A-8-4 /MH-36-A-8-3 | **MH-36-A-8-4 /MH-36-A-8-3** |  | 2026-09-24 | 2026-11-09 |  |  |
| A70730 |  | Excavation | 10d | 2026-09-24 | 2026-10-05 | A70780, A1080, A58910 | 12d |
| A70740 |  | Pipe Laying | 10d | 2026-10-06 | 2026-10-17 | A70730 | 12d |
| A70750 |  | Install Manhole | 10d | 2026-10-06 | 2026-10-17 | A70730 | 22d |
| A70760 |  | Testing & Inspection | 10d | 2026-10-18 | 2026-10-28 | A70740 | 12d |
| A70770 |  | Backfilling & Compaction | 10d | 2026-10-29 | 2026-11-09 | A70760, A70750, A70820 | 12d |
|  | MH-36-A-8-5 /MH-36-A-8-4 | **MH-36-A-8-5 /MH-36-A-8-4** |  | 2026-04-22 | 2026-06-07 |  |  |
| A70780 |  | Excavation | 10d | 2026-04-22 | 2026-05-03 | A59410, A59420, A1080 | 69d |
| A70790 |  | Pipe Laying | 10d | 2026-05-04 | 2026-05-14 | A70780 | 69d |
| A70800 |  | Install Manhole | 10d | 2026-05-04 | 2026-05-14 | A70780 | 79d |
| A70810 |  | Testing & Inspection | 10d | 2026-05-16 | 2026-05-26 | A70790 | 69d |
| A70820 |  | Backfilling & Compaction | 10d | 2026-05-27 | 2026-06-07 | A70810, A70800 | 69d |
|  | MH-53-A-1 /MH-53-A | **MH-53-A-1 /MH-53-A** |  | 2026-11-22 | 2027-01-06 |  |  |
| A70480 |  | Excavation | 10d | 2026-11-22 | 2026-12-02 | A70530, A1080 | 12d |
| A70490 |  | Pipe Laying | 10d | 2026-12-03 | 2026-12-14 | A70480 | 12d |
| A70500 |  | Install Manhole | 10d | 2026-12-03 | 2026-12-14 | A70480 | 22d |
| A70510 |  | Testing & Inspection | 10d | 2026-12-15 | 2026-12-26 | A70490 | 12d |
| A70520 |  | Backfilling & Compaction | 10d | 2026-12-27 | 2027-01-06 | A70510, A70500, A70570 | 12d |
|  | MH-53-A-2 /MH-53-A-1 | **MH-53-A-2 /MH-53-A-1** |  | 2026-11-10 | 2026-12-26 |  |  |
| A70530 |  | Excavation | 10d | 2026-11-10 | 2026-11-21 | A70580, A1080 | 12d |
| A70540 |  | Pipe Laying | 10d | 2026-11-22 | 2026-12-02 | A70530 | 12d |
| A70550 |  | Install Manhole | 10d | 2026-11-22 | 2026-12-02 | A70530 | 22d |
| A70560 |  | Testing & Inspection | 10d | 2026-12-03 | 2026-12-14 | A70540 | 12d |
| A70570 |  | Backfilling & Compaction | 10d | 2026-12-15 | 2026-12-26 | A70560, A70550, A70620 | 12d |
|  | LR 08 | **LR 08** |  | 2026-05-11 | 2027-01-06 |  |  |
|  | MH-36-A-6-1 /MH-36-A-6 | **MH-36-A-6-1 /MH-36-A-6** |  | 2026-05-11 | 2026-06-25 |  |  |
| A70430 |  | Excavation | 10d | 2026-05-11 | 2026-05-21 | A59440, A59450, A1080 | 40d |

| ID | WBS | Task | Duration | Start | Finish | Predecessors | Total float |
| --- | --- | --- | --- | --- | --- | --- | --- |
| A70440 |  | Pipe Laying | 10d | 2026-05-23 | 2026-06-02 | A70430 | 40d |
| A70450 |  | Install Manhole | 10d | 2026-05-23 | 2026-06-02 | A70430 | 50d |
| A70460 |  | Testing & Inspection | 10d | 2026-06-03 | 2026-06-14 | A70440 | 40d |
| A70470 |  | Backfilling & Compaction | 10d | 2026-06-15 | 2026-06-25 | A70460, A70450 | 40d |
|  | MH-36-A-6-2 /MH-36-A-6-1 | **MH-36-A-6-2 /MH-36-A-6-1** |  | 2026-09-24 | 2026-11-09 |  |  |
| A70380 |  | Excavation | 10d | 2026-09-24 | 2026-10-05 | A70430, A1080, A58910 | 12d |
| A70390 |  | Pipe Laying | 10d | 2026-10-06 | 2026-10-17 | A70380 | 12d |
| A70400 |  | Install Manhole | 10d | 2026-10-06 | 2026-10-17 | A70380 | 22d |
| A70410 |  | Testing & Inspection | 10d | 2026-10-18 | 2026-10-28 | A70390 | 12d |
| A70420 |  | Backfilling & Compaction | 10d | 2026-10-29 | 2026-11-09 | A70410, A70400, A70470 | 12d |
|  | MH-36-A-6-3 /MH-36-A-6-2 | **MH-36-A-6-3 /MH-36-A-6-2** |  | 2026-10-06 | 2026-11-21 |  |  |
| A70330 |  | Excavation | 10d | 2026-10-06 | 2026-10-17 | A70380, A1080 | 12d |
| A70340 |  | Pipe Laying | 10d | 2026-10-18 | 2026-10-28 | A70330 | 12d |
| A70350 |  | Install Manhole | 10d | 2026-10-18 | 2026-10-28 | A70330 | 22d |
| A70360 |  | Testing & Inspection | 10d | 2026-10-29 | 2026-11-09 | A70340 | 12d |
| A70370 |  | Backfilling & Compaction | 10d | 2026-11-10 | 2026-11-21 | A70360, A70350, A70420 | 12d |
|  | MH-36-A-6-4 /MH-36-A-6-3 | **MH-36-A-6-4 /MH-36-A-6-3** |  | 2026-10-18 | 2026-12-02 |  |  |
| A70280 |  | Excavation | 10d | 2026-10-18 | 2026-10-28 | A70330, A1080 | 12d |
| A70290 |  | Pipe Laying | 10d | 2026-10-29 | 2026-11-09 | A70280 | 12d |
| A70300 |  | Install Manhole | 10d | 2026-10-29 | 2026-11-09 | A70280 | 22d |
| A70310 |  | Testing & Inspection | 10d | 2026-11-10 | 2026-11-21 | A70290 | 12d |
| A70320 |  | Backfilling & Compaction | 10d | 2026-11-22 | 2026-12-02 | A70310, A70300, A70370 | 12d |
|  | MH-36-A-6-5 /MH-36-A-6-4 | **MH-36-A-6-5 /MH-36-A-6-4** |  | 2026-10-29 | 2026-12-14 |  |  |
| A70230 |  | Excavation | 10d | 2026-10-29 | 2026-11-09 | A70280, A1080 | 12d |
| A70240 |  | Pipe Laying | 10d | 2026-11-10 | 2026-11-21 | A70230 | 12d |
| A70250 |  | Install Manhole | 10d | 2026-11-10 | 2026-11-21 | A70230 | 22d |
| A70260 |  | Testing & Inspection | 10d | 2026-11-22 | 2026-12-02 | A70240 | 12d |
| A70270 |  | Backfilling & Compaction | 10d | 2026-12-03 | 2026-12-14 | A70260, A70250, A70320 | 12d |
|  | MH-36-A-6-6 /MH-36-A-6-5 | **MH-36-A-6-6 /MH-36-A-6-5** |  | 2026-11-10 | 2026-12-26 |  |  |
| A70180 |  | Excavation | 10d | 2026-11-10 | 2026-11-21 | A70230, A1080 | 12d |
| A70190 |  | Pipe Laying | 10d | 2026-11-22 | 2026-12-02 | A70180 | 12d |
| A70200 |  | Install Manhole | 10d | 2026-11-22 | 2026-12-02 | A70180 | 22d |
| A70210 |  | Testing & Inspection | 10d | 2026-12-03 | 2026-12-14 | A70190 | 12d |
| A70220 |  | Backfilling & Compaction | 10d | 2026-12-15 | 2026-12-26 | A70210, A70200, A70270 | 12d |
|  | MH-36-A-6-7 /MH-36-A-6-6 | **MH-36-A-6-7 /MH-36-A-6-6** |  | 2026-11-22 | 2027-01-06 |  |  |
| A70130 |  | Excavation | 10d | 2026-11-22 | 2026-12-02 | A70180, A1080 | 12d |
| A70140 |  | Pipe Laying | 10d | 2026-12-03 | 2026-12-14 | A70130 | 12d |
| A70150 |  | Install Manhole | 10d | 2026-12-03 | 2026-12-14 | A70130 | 22d |
| A70160 |  | Testing & Inspection | 10d | 2026-12-15 | 2026-12-26 | A70140 | 12d |
| A70170 |  | Backfilling & Compaction | 10d | 2026-12-27 | 2027-01-06 | A70160, A70150, A70220 | 12d |
|  | LR 09 | **LR 09** |  | 2026-02-12 | 2026-11-25 |  |  |
|  | MH-36-A-3-1 /MH-36-A-3 | **MH-36-A-3-1 /MH-36-A-3** |  | 2026-02-12 | 2026-03-30 |  |  |
| A70080 |  | Excavation | 10d | 2026-02-12 | 2026-02-23 | A59470, A59480, A1080 | 139d |
| A70090 |  | Pipe Laying | 10d | 2026-02-24 | 2026-03-07 | A70080 | 139d |
| A70100 |  | Install Manhole | 10d | 2026-02-24 | 2026-03-07 | A70080 | 149d |
| A70110 |  | Testing & Inspection | 10d | 2026-03-08 | 2026-03-18 | A70090 | 139d |
| A70120 |  | Backfilling & Compaction | 10d | 2026-03-19 | 2026-03-30 | A70110, A70100 | 139d |
|  | MH-36-A-3-2 /MH-36-A-3-1 | **MH-36-A-3-2 /MH-36-A-3-1** |  | 2026-09-24 | 2026-11-09 |  |  |
| A70030 |  | Excavation | 10d | 2026-09-24 | 2026-10-05 | A70080, A1080, A58910 | 48d |
| A70040 |  | Pipe Laying | 10d | 2026-10-06 | 2026-10-17 | A70030 | 48d |
| A70050 |  | Install Manhole | 10d | 2026-10-06 | 2026-10-17 | A70030 | 58d |
| A70060 |  | Testing & Inspection | 10d | 2026-10-18 | 2026-10-28 | A70040 | 48d |
| A70070 |  | Backfilling & Compaction | 10d | 2026-10-29 | 2026-11-09 | A70060, A70050, A70120 | 48d |
|  | MH-36-A-3-3 /MH-36-A-3-2 | **MH-36-A-3-3 /MH-36-A-3-2** |  | 2026-10-06 | 2026-11-21 |  |  |
| A69980 |  | Excavation | 10d | 2026-10-06 | 2026-10-17 | A70030, A1080 | 48d |
| A69990 |  | Pipe Laying | 10d | 2026-10-18 | 2026-10-28 | A69980 | 48d |
| A70000 |  | Install Manhole | 10d | 2026-10-18 | 2026-10-28 | A69980 | 58d |
| A70010 |  | Testing & Inspection | 10d | 2026-10-29 | 2026-11-09 | A69990 | 48d |
| A70020 |  | Backfilling & Compaction | 10d | 2026-11-10 | 2026-11-21 | A70010, A70000, A70070 | 48d |
|  | MH-36-A-3-4 /MH-36-A-3-3 | **MH-36-A-3-4 /MH-36-A-3-3** |  | 2026-10-18 | 2026-11-25 |  |  |
| A69930 |  | Excavation | 10d | 2026-10-18 | 2026-10-28 | A69980, A1080 | 48d |
| A69940 |  | Pipe Laying | 10d | 2026-10-29 | 2026-11-09 | A69930 | 48d |
| A69950 |  | Install Manhole | 10d | 2026-10-29 | 2026-11-09 | A69930 | 58d |
| A69960 |  | Testing & Inspection | 10d | 2026-11-10 | 2026-11-21 | A69940 | 48d |
| A69970 |  | Backfilling & Compaction | 4d | 2026-11-22 | 2026-11-25 | A69960, A69950, A70020 | 48d |
|  | LR 010 | **LR 010** |  | 2026-09-24 | 2026-11-15 |  |  |
|  | MH-32-A-18-1 /MH-32-A-18 | **MH-32-A-18-1 /MH-32-A-18** |  | 2026-09-30 | 2026-11-15 |  |  |
| A69830 |  | Excavation | 10d | 2026-09-30 | 2026-10-11 | A69880, A1080, A58910 | 57d |
| A69840 |  | Pipe Laying | 10d | 2026-10-12 | 2026-10-22 | A69830 | 57d |
| A69850 |  | Install Manhole | 10d | 2026-10-12 | 2026-10-22 | A69830 | 67d |

| ID | WBS | Task | Duration | Start | Finish | Predecessors | Total float |
| --- | --- | --- | --- | --- | --- | --- | --- |
| A69860 |  | Testing & Inspection | 10d | 2026-10-24 | 2026-11-03 | A69840 | 57d |
| A69870 |  | Backfilling & Compaction | 10d | 2026-11-04 | 2026-11-15 | A69860, A69850, A69920 | 57d |
|  | MH-32-A-18-2 /MH-32-A-18-1 | **MH-32-A-18-2 /MH-32-A-18-1** |  | 2026-09-24 | 2026-10-17 |  |  |
| A69880 |  | Excavation | 5d | 2026-09-24 | 2026-09-29 | A59500, A59510, A1080, A58910 | 2d |
| A69890 |  | Pipe Laying | 5d | 2026-09-30 | 2026-10-05 | A69880 | 2d |
| A69900 |  | Install Manhole | 5d | 2026-09-30 | 2026-10-05 | A69880 | 7d |
| A69910 |  | Testing & Inspection | 5d | 2026-10-06 | 2026-10-11 | A69890 | 2d |
| A69920 |  | Backfilling & Compaction | 5d | 2026-10-12 | 2026-10-17 | A69910, A69900 | 2d |
|  | LR 011 | **LR 011** |  | 2026-03-17 | 2026-11-14 |  |  |
|  | MH-32-A-16-3-1 /MH-32-A-16-3 | **MH-32-A-16-3-1 /MH-32-A-16-3** |  | 2026-10-06 | 2026-11-14 |  |  |
| A69680 |  | Excavation | 10d | 2026-10-06 | 2026-10-17 | A69730, A1080 | 10d |
| A69690 |  | Pipe Laying | 10d | 2026-10-18 | 2026-10-28 | A69680 | 60d |
| A69700 |  | Install Manhole | 10d | 2026-10-18 | 2026-10-28 | A69680 | 62d |
| A69710 |  | Testing & Inspection | 2d | 2026-10-29 | 2026-10-31 | A69690 | 60d |
| A69720 |  | Backfilling & Compaction | 10d | 2026-11-03 | 2026-11-14 | A69710, A69700, A69770 | 58d |
|  | MH-32-A-16-3-2 /MH-32-A-16-3-1 | **MH-32-A-16-3-2 /MH-32-A-16-3-1** |  | 2026-09-24 | 2026-11-02 |  |  |
| A69730 |  | Excavation | 10d | 2026-09-24 | 2026-10-05 | A69780, A1080, A58910 | 10d |
| A69740 |  | Pipe Laying | 10d | 2026-10-06 | 2026-10-17 | A69730 | 58d |
| A69750 |  | Install Manhole | 10d | 2026-10-06 | 2026-10-17 | A69730 | 68d |
| A69760 |  | Testing & Inspection | 10d | 2026-10-18 | 2026-10-28 | A69740 | 58d |
| A69770 |  | Backfilling & Compaction | 4d | 2026-10-29 | 2026-11-02 | A69760, A69750, A69820 | 58d |
|  | MH-32-A-16-3-3 /MH-32-A-16-3-2 | **MH-32-A-16-3-3 /MH-32-A-16-3-2** |  | 2026-03-17 | 2026-05-02 |  |  |
| A69780 |  | Excavation | 10d | 2026-03-17 | 2026-03-28 | A59530, A59540, A1080 | 164d |
| A69790 |  | Pipe Laying | 10d | 2026-03-29 | 2026-04-08 | A69780 | 185d |
| A69800 |  | Install Manhole | 10d | 2026-03-29 | 2026-04-08 | A69780 | 195d |
| A69810 |  | Testing & Inspection | 10d | 2026-04-09 | 2026-04-20 | A69790 | 185d |
| A69820 |  | Backfilling & Compaction | 10d | 2026-04-21 | 2026-05-02 | A69810, A69800 | 185d |
|  | LR 012 | **LR 012** |  | 2026-10-18 | 2026-12-10 |  |  |
|  | MH-32-A-16-5-1 /MH-32-A-16-5 | **MH-32-A-16-5-1 /MH-32-A-16-5** |  | 2026-11-02 | 2026-12-10 |  |  |
| A69530 |  | Excavation | 10d | 2026-11-02 | 2026-11-12 | A69580, A1080 | 35d |
| A69540 |  | Pipe Laying | 4d | 2026-11-14 | 2026-11-17 | A69530 | 35d |
| A69550 |  | Install Manhole | 4d | 2026-11-14 | 2026-11-17 | A69530 | 45d |
| A69560 |  | Testing & Inspection | 10d | 2026-11-18 | 2026-11-29 | A69540 | 35d |
| A69570 |  | Backfilling & Compaction | 10d | 2026-11-30 | 2026-12-10 | A69560, A69550, A69620 | 35d |
|  | MH-32-A-16-5-2 /MH-32-A-16-5-1 | **MH-32-A-16-5-2 /MH-32-A-16-5-1** |  | 2026-10-21 | 2026-11-26 |  |  |
| A69580 |  | Excavation | 10d | 2026-10-21 | 2026-11-01 | A69630, A1080, A58910 | 35d |
| A69590 |  | Pipe Laying | 10d | 2026-11-02 | 2026-11-12 | A69580 | 37d |
| A69600 |  | Install Manhole | 10d | 2026-11-02 | 2026-11-12 | A69580 | 39d |
| A69610 |  | Testing & Inspection | 2d | 2026-11-14 | 2026-11-15 | A69590 | 37d |
| A69620 |  | Backfilling & Compaction | 10d | 2026-11-16 | 2026-11-26 | A69610, A69600, A69670 | 37d |
|  | MH-32-A-16-5-3 /MH-32-A-16-5-2 | **MH-32-A-16-5-3 /MH-32-A-16-5-2** |  | 2026-10-18 | 2026-10-31 |  |  |
| A69630 |  | Excavation | 3d | 2026-10-18 | 2026-10-20 | A59560, A59570, A1080, A69680 | 10d |
| A69640 |  | Pipe Laying | 3d | 2026-10-21 | 2026-10-24 | A69630 | 10d |
| A69650 |  | Install Manhole | 3d | 2026-10-21 | 2026-10-24 | A69630 | 13d |
| A69660 |  | Testing & Inspection | 3d | 2026-10-25 | 2026-10-27 | A69640 | 10d |
| A69670 |  | Backfilling & Compaction | 3d | 2026-10-28 | 2026-10-31 | A69660, A69650 | 10d |
|  | LR 013 | **LR 013** |  | 2026-04-19 | 2026-11-14 |  |  |
|  | MH-36-A-3-2-1 /MH-36-A-3-2 | **MH-36-A-3-2-1 /MH-36-A-3-2** |  | 2026-10-06 | 2026-11-14 |  |  |
| A69380 |  | Excavation | 4d | 2026-10-06 | 2026-10-10 | A69430, A1080 | 58d |
| A69390 |  | Pipe Laying | 10d | 2026-10-11 | 2026-10-21 | A69380 | 58d |
| A69400 |  | Install Manhole | 10d | 2026-10-11 | 2026-10-21 | A69380 | 68d |
| A69410 |  | Testing & Inspection | 10d | 2026-10-22 | 2026-11-02 | A69390 | 58d |
| A69420 |  | Backfilling & Compaction | 10d | 2026-11-03 | 2026-11-14 | A69410, A69400, A69470 | 58d |
|  | MH-36-A-3-2-2 /MH-36-A-3-2-1 | **MH-36-A-3-2-2 /MH-36-A-3-2-1** |  | 2026-09-24 | 2026-11-02 |  |  |
| A69430 |  | Excavation | 10d | 2026-09-24 | 2026-10-05 | A69480, A1080, A58910 | 58d |
| A69440 |  | Pipe Laying | 4d | 2026-10-06 | 2026-10-10 | A69430 | 58d |
| A69450 |  | Install Manhole | 4d | 2026-10-06 | 2026-10-10 | A69430 | 68d |
| A69460 |  | Testing & Inspection | 10d | 2026-10-11 | 2026-10-21 | A69440 | 58d |
| A69470 |  | Backfilling & Compaction | 10d | 2026-10-22 | 2026-11-02 | A69460, A69450, A69520 | 58d |
|  | MH-36-A-3-2-3 /MH-36-A-3-2-2 | **MH-36-A-3-2-3 /MH-36-A-3-2-2** |  | 2026-04-19 | 2026-05-25 |  |  |
| A69480 |  | Excavation | 10d | 2026-04-19 | 2026-04-29 | A59590, A59600, A1080 | 107d |
| A69490 |  | Pipe Laying | 10d | 2026-04-30 | 2026-05-11 | A69480 | 107d |
| A69500 |  | Install Manhole | 10d | 2026-04-30 | 2026-05-11 | A69480 | 109d |
| A69510 |  | Testing & Inspection | 2d | 2026-05-12 | 2026-05-13 | A69490 | 107d |
| A69520 |  | Backfilling & Compaction | 10d | 2026-05-14 | 2026-05-25 | A69510, A69500 | 107d |
|  | LR 014 | **LR 014** |  | 2026-05-05 | 2026-11-11 |  |  |
|  | MH-36-A-3-5 /MH-36-A-3-4 | **MH-36-A-3-5 /MH-36-A-3-4** |  | 2026-05-05 | 2026-06-13 |  |  |
| A69330 |  | Excavation | 10d | 2026-05-05 | 2026-05-16 | A59620, A59630, A1080 | 103d |
| A69340 |  | Pipe Laying | 4d | 2026-05-17 | 2026-05-20 | A69330 | 103d |
| A69350 |  | Install Manhole | 4d | 2026-05-17 | 2026-05-20 | A69330 | 113d |

| ID | WBS | Task | Duration | Start | Finish | Predecessors | Total float |
| --- | --- | --- | --- | --- | --- | --- | --- |
| A69360 |  | Testing & Inspection | 10d | 2026-05-21 | 2026-06-01 | A69340 | 103d |
| A69370 |  | Backfilling & Compaction | 10d | 2026-06-02 | 2026-06-13 | A69360, A69350 | 103d |
|  | MH-36-A-3-6 /MH-36-A-3-5 | **MH-36-A-3-6 /MH-36-A-3-5** |  | 2026-09-24 | 2026-11-02 |  |  |
| A69280 |  | Excavation | 4d | 2026-09-24 | 2026-09-28 | A69330, A1080, A58910 | 60d |
| A69290 |  | Pipe Laying | 10d | 2026-09-29 | 2026-10-10 | A69280 | 60d |
| A69300 |  | Install Manhole | 10d | 2026-09-29 | 2026-10-10 | A69280 | 70d |
| A69310 |  | Testing & Inspection | 10d | 2026-10-11 | 2026-10-21 | A69290 | 60d |
| A69320 |  | Backfilling & Compaction | 10d | 2026-10-22 | 2026-11-02 | A69310, A69300, A69370 | 60d |
|  | MH-36-A-3-6-1 /MH-36-A-3-6 | **MH-36-A-3-6-1 /MH-36-A-3-6** |  | 2026-10-11 | 2026-11-11 |  |  |
| A69180 |  | Excavation | 10d | 2026-10-11 | 2026-10-21 | A69230, A1080 | 60d |
| A69190 |  | Pipe Laying | 4d | 2026-10-22 | 2026-10-26 | A69180 | 60d |
| A69200 |  | Install Manhole | 4d | 2026-10-22 | 2026-10-26 | A69180 | 70d |
| A69210 |  | Testing & Inspection | 10d | 2026-10-27 | 2026-11-07 | A69190 | 60d |
| A69220 |  | Backfilling & Compaction | 4d | 2026-11-08 | 2026-11-11 | A69210, A69200, A69270 | 60d |
|  | MH-36-A-3-6-2 /MH-36-A-3-6-1 | **MH-36-A-3-6-2 /MH-36-A-3-6-1** |  | 2026-09-29 | 2026-11-07 |  |  |
| A69230 |  | Excavation | 10d | 2026-09-29 | 2026-10-10 | A69280, A1080 | 60d |
| A69240 |  | Pipe Laying | 10d | 2026-10-11 | 2026-10-21 | A69230 | 60d |
| A69250 |  | Install Manhole | 10d | 2026-10-11 | 2026-10-21 | A69230 | 70d |
| A69260 |  | Testing & Inspection | 10d | 2026-10-22 | 2026-11-02 | A69240 | 60d |
| A69270 |  | Backfilling & Compaction | 4d | 2026-11-03 | 2026-11-07 | A69260, A69250, A69320 | 60d |
|  | LR 015 | **LR 015** |  | 2026-09-24 | 2026-10-31 |  |  |
|  | MH-36-A-3-7 /MH-36-A-3-6 | **MH-36-A-3-7 /MH-36-A-3-6** |  | 2026-09-24 | 2026-10-19 |  |  |
| A69130 |  | Excavation | 6d | 2026-09-24 | 2026-09-30 | A59650, A59660, A1080, A58910 | 1d |
| A69140 |  | Pipe Laying | 4d | 2026-10-01 | 2026-10-05 | A69130 | 15d |
| A69150 |  | Install Manhole | 4d | 2026-10-01 | 2026-10-05 | A69130 | 21d |
| A69160 |  | Testing & Inspection | 6d | 2026-10-06 | 2026-10-12 | A69140 | 15d |
| A69170 |  | Backfilling & Compaction | 6d | 2026-10-13 | 2026-10-19 | A69160, A69150 | 15d |
|  | MH-36-A-3-8 /MH-36-A-3-7 | **MH-36-A-3-8 /MH-36-A-3-7** |  | 2026-10-01 | 2026-10-26 |  |  |
| A69080 |  | Excavation | 4d | 2026-10-01 | 2026-10-05 | A69130, A1080, A58910 | 1d |
| A69090 |  | Pipe Laying | 6d | 2026-10-06 | 2026-10-12 | A69080 | 70d |
| A69100 |  | Install Manhole | 6d | 2026-10-06 | 2026-10-12 | A69080 | 76d |
| A69110 |  | Testing & Inspection | 6d | 2026-10-13 | 2026-10-19 | A69090 | 70d |
| A69120 |  | Backfilling & Compaction | 6d | 2026-10-20 | 2026-10-26 | A69110, A69100, A69170 | 70d |
|  | MH-36-A-3-9 /MH-36-A-3-8 | **MH-36-A-3-9 /MH-36-A-3-8** |  | 2026-10-06 | 2026-10-31 |  |  |
| A69030 |  | Excavation | 6d | 2026-10-06 | 2026-10-12 | A69080, A1080 | 1d |
| A69040 |  | Pipe Laying | 6d | 2026-10-13 | 2026-10-19 | A69030 | 70d |
| A69050 |  | Install Manhole | 6d | 2026-10-13 | 2026-10-19 | A69030 | 76d |
| A69060 |  | Testing & Inspection | 6d | 2026-10-20 | 2026-10-26 | A69040 | 70d |
| A69070 |  | Backfilling & Compaction | 4d | 2026-10-27 | 2026-10-31 | A69060, A69050, A69120 | 70d |
|  | EX LR 02 | **EX LR 02** |  | 2026-10-13 | 2026-11-08 |  |  |
|  | MH-32-A-12-9 /MH-32-A-12-8 | **MH-32-A-12-9 /MH-32-A-12-8** |  | 2026-10-13 | 2026-11-08 |  |  |
| A68980 |  | Excavation | 6d | 2026-10-13 | 2026-10-19 | A69030, A1080 | 1d |
| A68990 |  | Pipe Laying | 6d | 2026-10-20 | 2026-10-26 | A68980 | 1d |
| A69000 |  | Install Manhole | 6d | 2026-10-20 | 2026-10-26 | A68980 | 7d |
| A69010 |  | Testing & Inspection | 6d | 2026-10-27 | 2026-11-02 | A68990 | 1d |
| A69020 |  | Backfilling & Compaction | 5d | 2026-11-03 | 2026-11-08 | A69010, A69000 | 1d |
|  | COLLECTOR R-01 L | **COLLECTOR R-01 L** |  | 2026-06-28 | 2026-11-02 |  |  |
|  | MH-32-A-13 /MH-32-A-12 | **MH-32-A-13 /MH-32-A-12** |  | 2026-06-28 | 2026-08-12 |  |  |
| A68930 |  | Excavation | 10d | 2026-06-28 | 2026-07-08 | A59800, A59810, A1080 | 63d |
| A68940 |  | Pipe Laying | 10d | 2026-07-09 | 2026-07-20 | A68930 | 63d |
| A68950 |  | Install Manhole | 10d | 2026-07-09 | 2026-07-20 | A68930 | 73d |
| A68960 |  | Testing & Inspection | 10d | 2026-07-21 | 2026-08-01 | A68940 | 63d |
| A68970 |  | Backfilling & Compaction | 10d | 2026-08-02 | 2026-08-12 | A68960, A68950 | 63d |
|  | MH-32-A-14 /MH-32-A-13 | **MH-32-A-14 /MH-32-A-13** |  | 2026-07-09 | 2026-08-24 |  |  |
| A68880 |  | Excavation | 10d | 2026-07-09 | 2026-07-20 | A68930, A1080 | 68d |
| A68890 |  | Pipe Laying | 10d | 2026-07-21 | 2026-08-01 | A68880 | 68d |
| A68900 |  | Install Manhole | 10d | 2026-07-21 | 2026-08-01 | A68880 | 78d |
| A68910 |  | Testing & Inspection | 10d | 2026-08-02 | 2026-08-12 | A68890 | 68d |
| A68920 |  | Backfilling & Compaction | 10d | 2026-08-13 | 2026-08-24 | A68910, A68900, A68970 | 68d |
|  | MH-32-A-14-1 /MH-32-A-14 | **MH-32-A-14-1 /MH-32-A-14** |  | 2026-07-21 | 2026-09-05 |  |  |
| A68830 |  | Excavation | 10d | 2026-07-21 | 2026-08-01 | A68880, A1080 | 68d |
| A68840 |  | Pipe Laying | 10d | 2026-08-02 | 2026-08-12 | A68830 | 68d |
| A68850 |  | Install Manhole | 10d | 2026-08-02 | 2026-08-12 | A68830 | 78d |
| A68860 |  | Testing & Inspection | 10d | 2026-08-13 | 2026-08-24 | A68840 | 68d |
| A68870 |  | Backfilling & Compaction | 10d | 2026-08-25 | 2026-09-05 | A68860, A68850, A68920 | 68d |
|  | MH-32-A-14-2 /MH-32-A-14-1 | **MH-32-A-14-2 /MH-32-A-14-1** |  | 2026-08-02 | 2026-09-16 |  |  |
| A68780 |  | Excavation | 10d | 2026-08-02 | 2026-08-12 | A68830, A1080 | 68d |
| A68790 |  | Pipe Laying | 10d | 2026-08-13 | 2026-08-24 | A68780 | 68d |
| A68800 |  | Install Manhole | 10d | 2026-08-13 | 2026-08-24 | A68780 | 78d |
| A68810 |  | Testing & Inspection | 10d | 2026-08-25 | 2026-09-05 | A68790 | 68d |

| ID | WBS | Task | Duration | Start | Finish | Predecessors | Total float |
| --- | --- | --- | --- | --- | --- | --- | --- |
| A68820 |  | Backfilling & Compaction | 10d | 2026-09-06 | 2026-09-16 | A68810, A68800, A68870 | 68d |
|  | MH-32-A-14-3 /MH-32-A-14-2 | **MH-32-A-14-3 /MH-32-A-14-2** |  | 2026-08-13 | 2026-09-28 |  |  |
| A68730 |  | Excavation | 10d | 2026-08-13 | 2026-08-24 | A68780, A1080 | 68d |
| A68740 |  | Pipe Laying | 10d | 2026-08-25 | 2026-09-05 | A68730 | 68d |
| A68750 |  | Install Manhole | 10d | 2026-08-25 | 2026-09-05 | A68730 | 78d |
| A68760 |  | Testing & Inspection | 10d | 2026-09-06 | 2026-09-16 | A68740 | 68d |
| A68770 |  | Backfilling & Compaction | 10d | 2026-09-17 | 2026-09-28 | A68760, A68750, A68820 | 68d |
|  | MH-32-A-14-4 /MH-32-A-14-3 | **MH-32-A-14-4 /MH-32-A-14-3** |  | 2026-08-25 | 2026-10-10 |  |  |
| A68680 |  | Excavation | 10d | 2026-08-25 | 2026-09-05 | A68730, A1080 | 68d |
| A68690 |  | Pipe Laying | 10d | 2026-09-06 | 2026-09-16 | A68680 | 68d |
| A68700 |  | Install Manhole | 10d | 2026-09-06 | 2026-09-16 | A68680 | 78d |
| A68710 |  | Testing & Inspection | 10d | 2026-09-17 | 2026-09-28 | A68690 | 68d |
| A68720 |  | Backfilling & Compaction | 10d | 2026-09-29 | 2026-10-10 | A68710, A68700, A68770 | 68d |
|  | MH-32-A-14-5 /MH-32-A-14-4 | **MH-32-A-14-5 /MH-32-A-14-4** |  | 2026-09-06 | 2026-10-21 |  |  |
| A68630 |  | Excavation | 10d | 2026-09-06 | 2026-09-16 | A68680, A1080 | 68d |
| A68640 |  | Pipe Laying | 10d | 2026-09-17 | 2026-09-28 | A68630 | 68d |
| A68650 |  | Install Manhole | 10d | 2026-09-17 | 2026-09-28 | A68630 | 78d |
| A68660 |  | Testing & Inspection | 10d | 2026-09-29 | 2026-10-10 | A68640 | 68d |
| A68670 |  | Backfilling & Compaction | 10d | 2026-10-11 | 2026-10-21 | A68660, A68650, A68720 | 68d |
|  | MH-59-A-1 /MH-1 | **MH-59-A-1 /MH-1** |  | 2026-09-17 | 2026-11-02 |  |  |
| A68580 |  | Excavation | 10d | 2026-09-17 | 2026-09-28 | A68630, A1080 | 68d |
| A68590 |  | Pipe Laying | 10d | 2026-09-29 | 2026-10-10 | A68580 | 68d |
| A68600 |  | Install Manhole | 10d | 2026-09-29 | 2026-10-10 | A68580 | 78d |
| A68610 |  | Testing & Inspection | 10d | 2026-10-11 | 2026-10-21 | A68590 | 68d |
| A68620 |  | Backfilling & Compaction | 10d | 2026-10-22 | 2026-11-02 | A68610, A68600, A68670 | 68d |
|  | COLLECTOR R-01 R | **COLLECTOR R-01 R** |  | 2026-06-28 | 2026-11-02 |  |  |
|  | MH-32-A-11-1 /MH-32-A-11 | **MH-32-A-11-1 /MH-32-A-11** |  | 2026-06-28 | 2026-08-12 |  |  |
| A68530 |  | Excavation | 10d | 2026-06-28 | 2026-07-08 | A59800, A59810, A1080 | 63d |
| A68540 |  | Pipe Laying | 10d | 2026-07-09 | 2026-07-20 | A68530 | 63d |
| A68550 |  | Install Manhole | 10d | 2026-07-09 | 2026-07-20 | A68530 | 73d |
| A68560 |  | Testing & Inspection | 10d | 2026-07-21 | 2026-08-01 | A68540 | 63d |
| A68570 |  | Backfilling & Compaction | 10d | 2026-08-02 | 2026-08-12 | A68560, A68550 | 63d |
|  | MH-32-A-11-2 /MH-32-A-11-1 | **MH-32-A-11-2 /MH-32-A-11-1** |  | 2026-07-09 | 2026-08-24 |  |  |
| A68480 |  | Excavation | 10d | 2026-07-09 | 2026-07-20 | A68530, A1080 | 68d |
| A68490 |  | Pipe Laying | 10d | 2026-07-21 | 2026-08-01 | A68480 | 68d |
| A68500 |  | Install Manhole | 10d | 2026-07-21 | 2026-08-01 | A68480 | 78d |
| A68510 |  | Testing & Inspection | 10d | 2026-08-02 | 2026-08-12 | A68490 | 68d |
| A68520 |  | Backfilling & Compaction | 10d | 2026-08-13 | 2026-08-24 | A68510, A68500, A68570 | 68d |
|  | MH-32-A-11-3 /MH-32-A-11-2 | **MH-32-A-11-3 /MH-32-A-11-2** |  | 2026-07-21 | 2026-09-05 |  |  |
| A68430 |  | Excavation | 10d | 2026-07-21 | 2026-08-01 | A68480, A1080 | 68d |
| A68440 |  | Pipe Laying | 10d | 2026-08-02 | 2026-08-12 | A68430 | 68d |
| A68450 |  | Install Manhole | 10d | 2026-08-02 | 2026-08-12 | A68430 | 78d |
| A68460 |  | Testing & Inspection | 10d | 2026-08-13 | 2026-08-24 | A68440 | 68d |
| A68470 |  | Backfilling & Compaction | 10d | 2026-08-25 | 2026-09-05 | A68460, A68450, A68520 | 68d |
|  | MH-32-A-11-4 /MH-32-A-11-3 | **MH-32-A-11-4 /MH-32-A-11-3** |  | 2026-08-02 | 2026-09-16 |  |  |
| A68380 |  | Excavation | 10d | 2026-08-02 | 2026-08-12 | A68430, A1080 | 68d |
| A68390 |  | Pipe Laying | 10d | 2026-08-13 | 2026-08-24 | A68380 | 68d |
| A68400 |  | Install Manhole | 10d | 2026-08-13 | 2026-08-24 | A68380 | 78d |
| A68410 |  | Testing & Inspection | 10d | 2026-08-25 | 2026-09-05 | A68390 | 68d |
| A68420 |  | Backfilling & Compaction | 10d | 2026-09-06 | 2026-09-16 | A68410, A68400, A68470 | 68d |
|  | MH-32-A-11-5 /MH-32-A-11-4 | **MH-32-A-11-5 /MH-32-A-11-4** |  | 2026-08-13 | 2026-09-28 |  |  |
| A68330 |  | Excavation | 10d | 2026-08-13 | 2026-08-24 | A68380, A1080 | 68d |
| A68340 |  | Pipe Laying | 10d | 2026-08-25 | 2026-09-05 | A68330 | 68d |
| A68350 |  | Install Manhole | 10d | 2026-08-25 | 2026-09-05 | A68330 | 78d |
| A68360 |  | Testing & Inspection | 10d | 2026-09-06 | 2026-09-16 | A68340 | 68d |
| A68370 |  | Backfilling & Compaction | 10d | 2026-09-17 | 2026-09-28 | A68360, A68350, A68420 | 68d |
|  | MH-32-A-11-6 /MH-32-A-11-5 | **MH-32-A-11-6 /MH-32-A-11-5** |  | 2026-08-25 | 2026-10-10 |  |  |
| A68280 |  | Excavation | 10d | 2026-08-25 | 2026-09-05 | A68330, A1080 | 68d |
| A68290 |  | Pipe Laying | 10d | 2026-09-06 | 2026-09-16 | A68280 | 68d |
| A68300 |  | Install Manhole | 10d | 2026-09-06 | 2026-09-16 | A68280 | 78d |
| A68310 |  | Testing & Inspection | 10d | 2026-09-17 | 2026-09-28 | A68290 | 68d |
| A68320 |  | Backfilling & Compaction | 10d | 2026-09-29 | 2026-10-10 | A68310, A68300, A68370 | 68d |
|  | MH-32-A-11-7 /MH-32-A-11-6 | **MH-32-A-11-7 /MH-32-A-11-6** |  | 2026-09-06 | 2026-10-21 |  |  |
| A68230 |  | Excavation | 10d | 2026-09-06 | 2026-09-16 | A68280, A1080 | 68d |
| A68240 |  | Pipe Laying | 10d | 2026-09-17 | 2026-09-28 | A68230 | 68d |
| A68250 |  | Install Manhole | 10d | 2026-09-17 | 2026-09-28 | A68230 | 78d |
| A68260 |  | Testing & Inspection | 10d | 2026-09-29 | 2026-10-10 | A68240 | 68d |
| A68270 |  | Backfilling & Compaction | 10d | 2026-10-11 | 2026-10-21 | A68260, A68250, A68320 | 68d |
|  | MH-58-A-1 /MH-58-A | **MH-58-A-1 /MH-58-A** |  | 2026-09-17 | 2026-11-02 |  |  |
| A68180 |  | Excavation | 10d | 2026-09-17 | 2026-09-28 | A68230, A1080 | 68d |

| ID | WBS | Task | Duration | Start | Finish | Predecessors | Total float |
| --- | --- | --- | --- | --- | --- | --- | --- |
| A68190 |  | Pipe Laying | 10d | 2026-09-29 | 2026-10-10 | A68180 | 68d |
| A68200 |  | Install Manhole | 10d | 2026-09-29 | 2026-10-10 | A68180 | 78d |
| A68210 |  | Testing & Inspection | 10d | 2026-10-11 | 2026-10-21 | A68190 | 68d |
| A68220 |  | Backfilling & Compaction | 10d | 2026-10-22 | 2026-11-02 | A68210, A68200, A68270 | 68d |
|  | SEWEGE NETWORK | **SEWEGE NETWORK** |  | 2026-03-31 | 2027-01-17 |  |  |
|  | LR 01 | **LR 01** |  | 2026-05-23 | 2026-10-18 |  |  |
|  | MH-1.10 / MH-1.11 | **MH-1.10 / MH-1.11** |  | 2026-05-23 | 2026-07-07 |  |  |
| A38560 |  | Excavation | 2d | 2026-05-23 | 2026-05-24 | A74620, A1190, A1180, A1220, A1210, A1200, A10940, A10960, A10950, A11040 SS+10d, A11080 SS+10d, A11040 FF+10d, A11080 FF+10d | 103d |
| A38580 |  | Pipe Laying | 8d | 2026-05-25 | 2026-06-02 | A38560 | 103d |
| A38620 |  | Testing & Inspection | 2d | 2026-06-03 | 2026-06-04 | A38580 | 103d |
| A38610 |  | Install Manhole | 4d | 2026-06-29 | 2026-07-02 | A38560, A10230 | 79d |
| A38640 |  | Backfilling & Compaction | 4d | 2026-07-04 | 2026-07-07 | A38620, A38610 | 79d |
|  | MH-1.10.0 / MH-1.10.1 | **MH-1.10.0 / MH-1.10.1** |  | 2026-05-25 | 2026-07-12 |  |  |
| A38650 |  | Excavation | 2d | 2026-05-25 | 2026-05-26 | A38560, A1190 | 105d |
| A38660 |  | Pipe Laying | 8d | 2026-05-27 | 2026-06-04 | A38650 | 105d |
| A38680 |  | Testing & Inspection | 2d | 2026-06-06 | 2026-06-07 | A38660 | 105d |
| A38670 |  | Install Manhole | 4d | 2026-06-29 | 2026-07-02 | A38650, A10230 | 83d |
| A38690 |  | Backfilling & Compaction | 4d | 2026-07-08 | 2026-07-12 | A38680, A38670, A38640 | 79d |
|  | MH-1.10.1 / MH-1.10.2 | **MH-1.10.1 / MH-1.10.2** |  | 2026-05-27 | 2026-07-16 |  |  |
| A38700 |  | Excavation | 2d | 2026-05-27 | 2026-05-28 | A38650, A1190 | 107d |
| A38710 |  | Pipe Laying | 8d | 2026-05-30 | 2026-06-07 | A38700 | 107d |
| A38730 |  | Testing & Inspection | 2d | 2026-06-08 | 2026-06-09 | A38710 | 107d |
| A38720 |  | Install Manhole | 4d | 2026-06-29 | 2026-07-02 | A38700, A10230 | 87d |
| A38740 |  | Backfilling & Compaction | 4d | 2026-07-13 | 2026-07-16 | A38730, A38720, A38690 | 79d |
|  | MH-1.11 / MH-1.12 | **MH-1.11 / MH-1.12** |  | 2026-05-30 | 2026-07-21 |  |  |
| A38750 |  | Excavation | 2d | 2026-05-30 | 2026-05-31 | A38700, A1190 | 108d |
| A38760 |  | Pipe Laying | 8d | 2026-06-01 | 2026-06-09 | A38750 | 109d |
| A38780 |  | Testing & Inspection | 2d | 2026-06-10 | 2026-06-11 | A38760 | 109d |
| A38770 |  | Install Manhole | 4d | 2026-06-29 | 2026-07-02 | A38750, A10230 | 91d |
| A38790 |  | Backfilling & Compaction | 4d | 2026-07-18 | 2026-07-21 | A38780, A38770, A38740 | 79d |
|  | MH-1.12.0 / MH-1.12.1 | **MH-1.12.0 / MH-1.12.1** |  | 2026-06-01 | 2026-07-26 |  |  |
| A38800 |  | Excavation | 2d | 2026-06-01 | 2026-06-02 | A38750, A1190 | 108d |
| A38810 |  | Pipe Laying | 8d | 2026-06-03 | 2026-06-11 | A38800 | 111d |
| A38830 |  | Testing & Inspection | 2d | 2026-06-13 | 2026-06-14 | A38810 | 111d |
| A38820 |  | Install Manhole | 4d | 2026-06-29 | 2026-07-02 | A38800, A10230 | 95d |
| A38840 |  | Backfilling & Compaction | 4d | 2026-07-22 | 2026-07-26 | A38830, A38820, A38790 | 79d |
|  | MH-1.12.1 / MH-1.12.2 | **MH-1.12.1 / MH-1.12.2** |  | 2026-06-03 | 2026-07-30 |  |  |
| A38850 |  | Excavation | 2d | 2026-06-03 | 2026-06-04 | A38800, A1190 | 108d |
| A38860 |  | Pipe Laying | 8d | 2026-06-06 | 2026-06-14 | A38850 | 113d |
| A38880 |  | Testing & Inspection | 2d | 2026-06-15 | 2026-06-16 | A38860 | 113d |
| A38870 |  | Install Manhole | 4d | 2026-06-29 | 2026-07-02 | A38850, A10230 | 99d |
| A38890 |  | Backfilling & Compaction | 4d | 2026-07-27 | 2026-07-30 | A38880, A38870, A38840 | 79d |
|  | MH-1.12.1.0 / MH-1.12.1.1 | **MH-1.12.1.0 / MH-1.12.1.1** |  | 2026-06-06 | 2026-08-04 |  |  |
| A38900 |  | Excavation | 2d | 2026-06-06 | 2026-06-07 | A38850, A1190 | 108d |
| A38910 |  | Pipe Laying | 8d | 2026-06-08 | 2026-06-16 | A38900 | 115d |
| A38930 |  | Testing & Inspection | 2d | 2026-06-17 | 2026-06-18 | A38910 | 115d |
| A38920 |  | Install Manhole | 4d | 2026-06-29 | 2026-07-02 | A38900, A10230 | 103d |
| A38940 |  | Backfilling & Compaction | 4d | 2026-08-01 | 2026-08-04 | A38930, A38920, A38890 | 79d |
|  | MH-1.12.2 / MH-1.12.3 | **MH-1.12.2 / MH-1.12.3** |  | 2026-06-08 | 2026-08-09 |  |  |
| A38950 |  | Excavation | 2d | 2026-06-08 | 2026-06-09 | A38900, A1190 | 108d |
| A38960 |  | Pipe Laying | 8d | 2026-06-10 | 2026-06-18 | A38950 | 117d |
| A38970 |  | Install Manhole | 4d | 2026-06-10 | 2026-06-14 | A38950 | 123d |
| A38980 |  | Testing & Inspection | 2d | 2026-06-20 | 2026-06-21 | A38960 | 117d |
| A38990 |  | Backfilling & Compaction | 4d | 2026-08-05 | 2026-08-09 | A38980, A38970, A38940 | 79d |
|  | MH-1.12.2.0 / MH-1.12.2.1 | **MH-1.12.2.0 / MH-1.12.2.1** |  | 2026-06-10 | 2026-08-13 |  |  |
| A39000 |  | Excavation | 2d | 2026-06-10 | 2026-06-11 | A38950, A1190 | 108d |
| A39010 |  | Pipe Laying | 8d | 2026-06-13 | 2026-06-21 | A39000 | 119d |
| A39020 |  | Install Manhole | 4d | 2026-06-13 | 2026-06-16 | A39000 | 125d |
| A39030 |  | Testing & Inspection | 2d | 2026-06-22 | 2026-06-23 | A39010 | 119d |
| A39040 |  | Backfilling & Compaction | 4d | 2026-08-10 | 2026-08-13 | A39030, A39020, A38990 | 79d |
|  | MH-1.12.3.0 / MH-1.12.3.1 | **MH-1.12.3.0 / MH-1.12.3.1** |  | 2026-06-13 | 2026-08-18 |  |  |
| A39050 |  | Excavation | 2d | 2026-06-13 | 2026-06-14 | A39000, A1190 | 108d |
| A39060 |  | Pipe Laying | 8d | 2026-06-15 | 2026-06-23 | A39050 | 121d |
| A39070 |  | Install Manhole | 4d | 2026-06-15 | 2026-06-18 | A39050 | 127d |
| A39080 |  | Testing & Inspection | 2d | 2026-06-24 | 2026-06-25 | A39060 | 121d |
| A39090 |  | Backfilling & Compaction | 4d | 2026-08-15 | 2026-08-18 | A39080, A39070, A39040 | 79d |
|  | MH-1.12.3.1 / MH-1.12.3.2 | **MH-1.12.3.1 / MH-1.12.3.2** |  | 2026-06-15 | 2026-08-23 |  |  |
| A39100 |  | Excavation | 2d | 2026-06-15 | 2026-06-16 | A39050, A1190 | 108d |
| A39110 |  | Pipe Laying | 8d | 2026-06-17 | 2026-06-25 | A39100 | 123d |
| A39120 |  | Install Manhole | 4d | 2026-06-17 | 2026-06-21 | A39100 | 129d |

| ID | WBS | Task | Duration | Start | Finish | Predecessors | Total float |
| --- | --- | --- | --- | --- | --- | --- | --- |
| A39130 |  | Testing & Inspection | 2d | 2026-06-27 | 2026-06-28 | A39110 | 123d |
| A39140 |  | Backfilling & Compaction | 4d | 2026-08-19 | 2026-08-23 | A39130, A39120, A39090 | 79d |
|  | MH-1.12.3.2.0 / MH-1.12.3.2.1 | **MH-1.12.3.2.0 / MH-1.12.3.2.1** |  | 2026-06-17 | 2026-08-27 |  |  |
| A39150 |  | Excavation | 2d | 2026-06-17 | 2026-06-18 | A39100, A1190 | 108d |
| A39160 |  | Pipe Laying | 8d | 2026-06-20 | 2026-06-28 | A39150 | 125d |
| A39170 |  | Install Manhole | 4d | 2026-06-20 | 2026-06-23 | A39150 | 131d |
| A39180 |  | Testing & Inspection | 2d | 2026-06-29 | 2026-06-30 | A39160 | 125d |
| A39190 |  | Backfilling & Compaction | 4d | 2026-08-24 | 2026-08-27 | A39180, A39170, A39140 | 79d |
|  | MH-1.9 / MH-1.10 | **MH-1.9 / MH-1.10** |  | 2026-06-20 | 2026-09-01 |  |  |
| A39200 |  | Excavation | 2d | 2026-06-20 | 2026-06-21 | A39150, A1190 | 108d |
| A39210 |  | Pipe Laying | 8d | 2026-06-22 | 2026-06-30 | A39200 | 127d |
| A39220 |  | Install Manhole | 4d | 2026-06-22 | 2026-06-25 | A39200 | 133d |
| A39230 |  | Testing & Inspection | 2d | 2026-07-01 | 2026-07-02 | A39210 | 127d |
| A39240 |  | Backfilling & Compaction | 4d | 2026-08-29 | 2026-09-01 | A39230, A39220, A39190 | 79d |
|  | MH-2.17 / MH-2.18 | **MH-2.17 / MH-2.18** |  | 2026-06-22 | 2026-09-06 |  |  |
| A39250 |  | Excavation | 2d | 2026-06-22 | 2026-06-23 | A39200, A1190 | 108d |
| A39260 |  | Pipe Laying | 8d | 2026-06-24 | 2026-07-02 | A39250 | 129d |
| A39270 |  | Install Manhole | 4d | 2026-06-24 | 2026-06-28 | A39250 | 135d |
| A39280 |  | Testing & Inspection | 2d | 2026-07-04 | 2026-07-05 | A39260 | 129d |
| A39290 |  | Backfilling & Compaction | 4d | 2026-09-02 | 2026-09-06 | A39280, A39270, A39240 | 79d |
|  | MH-2.18 / MH-2.19 | **MH-2.18 / MH-2.19** |  | 2026-06-24 | 2026-09-10 |  |  |
| A39300 |  | Excavation | 2d | 2026-06-24 | 2026-06-25 | A39250, A1190 | 108d |
| A39310 |  | Pipe Laying | 8d | 2026-06-27 | 2026-07-05 | A39300 | 131d |
| A39320 |  | Install Manhole | 4d | 2026-06-27 | 2026-06-30 | A39300 | 137d |
| A39330 |  | Testing & Inspection | 2d | 2026-07-06 | 2026-07-07 | A39310 | 131d |
| A39340 |  | Backfilling & Compaction | 4d | 2026-09-07 | 2026-09-10 | A39330, A39320, A39290 | 79d |
|  | MH-2.19 / MH-2.20 | **MH-2.19 / MH-2.20** |  | 2026-06-27 | 2026-09-15 |  |  |
| A39350 |  | Excavation | 2d | 2026-06-27 | 2026-06-28 | A39300, A1190 | 108d |
| A39360 |  | Pipe Laying | 8d | 2026-06-29 | 2026-07-07 | A39350 | 133d |
| A39370 |  | Install Manhole | 4d | 2026-06-29 | 2026-07-02 | A39350 | 139d |
| A39380 |  | Testing & Inspection | 2d | 2026-07-08 | 2026-07-09 | A39360 | 133d |
| A39390 |  | Backfilling & Compaction | 4d | 2026-09-12 | 2026-09-15 | A39380, A39370, A39340 | 79d |
|  | MH-2.20 / MH-2.21 | **MH-2.20 / MH-2.21** |  | 2026-06-29 | 2026-09-20 |  |  |
| A39400 |  | Excavation | 2d | 2026-06-29 | 2026-06-30 | A39350, A1190 | 108d |
| A39410 |  | Pipe Laying | 8d | 2026-07-01 | 2026-07-09 | A39400 | 135d |
| A39420 |  | Install Manhole | 4d | 2026-07-01 | 2026-07-05 | A39400 | 141d |
| A39430 |  | Testing & Inspection | 2d | 2026-07-11 | 2026-07-12 | A39410 | 135d |
| A39440 |  | Backfilling & Compaction | 4d | 2026-09-16 | 2026-09-20 | A39430, A39420, A39390 | 79d |
|  | MH-2.21 / MH-2.22 | **MH-2.21 / MH-2.22** |  | 2026-07-01 | 2026-09-24 |  |  |
| A39450 |  | Excavation | 2d | 2026-07-01 | 2026-07-02 | A39400, A1190 | 108d |
| A39460 |  | Pipe Laying | 4d | 2026-07-04 | 2026-07-07 | A39450 | 141d |
| A39470 |  | Install Manhole | 4d | 2026-07-04 | 2026-07-07 | A39450 | 143d |
| A39480 |  | Testing & Inspection | 2d | 2026-07-08 | 2026-07-09 | A39460 | 141d |
| A39490 |  | Backfilling & Compaction | 4d | 2026-09-21 | 2026-09-24 | A39480, A39470, A39440 | 79d |
|  | MH-2.22 / MH-2.23 | **MH-2.22 / MH-2.23** |  | 2026-07-04 | 2026-09-29 |  |  |
| A39500 |  | Excavation | 2d | 2026-07-04 | 2026-07-05 | A39450, A1190 | 108d |
| A39510 |  | Pipe Laying | 8d | 2026-07-06 | 2026-07-14 | A39500 | 139d |
| A39520 |  | Install Manhole | 4d | 2026-07-06 | 2026-07-09 | A39500 | 145d |
| A39530 |  | Testing & Inspection | 2d | 2026-07-15 | 2026-07-16 | A39510 | 139d |
| A39540 |  | Backfilling & Compaction | 4d | 2026-09-26 | 2026-09-29 | A39530, A39520, A39490 | 79d |
|  | MH-2.23 / MH-2.24 | **MH-2.23 / MH-2.24** |  | 2026-07-06 | 2026-10-04 |  |  |
| A39550 |  | Excavation | 2d | 2026-07-06 | 2026-07-07 | A39500, A1190 | 108d |
| A39560 |  | Pipe Laying | 8d | 2026-07-08 | 2026-07-16 | A39550 | 141d |
| A39570 |  | Install Manhole | 4d | 2026-07-08 | 2026-07-12 | A39550 | 147d |
| A39580 |  | Testing & Inspection | 2d | 2026-07-18 | 2026-07-19 | A39560 | 141d |
| A39590 |  | Backfilling & Compaction | 4d | 2026-09-30 | 2026-10-04 | A39580, A39570, A39540 | 79d |
|  | MH-2.24 / MH-2.25 | **MH-2.24 / MH-2.25** |  | 2026-07-08 | 2026-10-08 |  |  |
| A39600 |  | Excavation | 2d | 2026-07-08 | 2026-07-09 | A39550, A1190 | 108d |
| A39610 |  | Pipe Laying | 8d | 2026-07-11 | 2026-07-19 | A39600 | 143d |
| A39620 |  | Install Manhole | 4d | 2026-07-11 | 2026-07-14 | A39600 | 149d |
| A39630 |  | Testing & Inspection | 2d | 2026-07-20 | 2026-07-21 | A39610 | 143d |
| A39640 |  | Backfilling & Compaction | 4d | 2026-10-05 | 2026-10-08 | A39630, A39620, A39590 | 79d |
|  | MH-2.25 / MH-2.26 | **MH-2.25 / MH-2.26** |  | 2026-07-11 | 2026-10-13 |  |  |
| A39650 |  | Excavation | 2d | 2026-07-11 | 2026-07-12 | A39600, A1190 | 108d |
| A39660 |  | Pipe Laying | 8d | 2026-07-13 | 2026-07-21 | A39650 | 145d |
| A39670 |  | Install Manhole | 4d | 2026-07-13 | 2026-07-16 | A39650 | 151d |
| A39680 |  | Testing & Inspection | 2d | 2026-07-22 | 2026-07-23 | A39660 | 145d |
| A39690 |  | Backfilling & Compaction | 4d | 2026-10-10 | 2026-10-13 | A39680, A39670, A39640 | 79d |
|  | MH-2.8.7 / MH-2.8.8 | **MH-2.8.7 / MH-2.8.8** |  | 2026-07-13 | 2026-10-18 |  |  |
| A39700 |  | Excavation | 2d | 2026-07-13 | 2026-07-14 | A39650, A1190 | 108d |

| ID | WBS | Task | Duration | Start | Finish | Predecessors | Total float |
| --- | --- | --- | --- | --- | --- | --- | --- |
| A39710 |  | Pipe Laying | 8d | 2026-07-15 | 2026-07-23 | A39700 | 147d |
| A39720 |  | Install Manhole | 4d | 2026-07-15 | 2026-07-19 | A39700 | 153d |
| A39730 |  | Testing & Inspection | 2d | 2026-07-25 | 2026-07-26 | A39710 | 147d |
| A39740 |  | Backfilling & Compaction | 4d | 2026-10-14 | 2026-10-18 | A39730, A39720, A39690 | 79d |
|  | LR 02 | **LR 02** |  | 2026-05-05 | 2026-10-17 |  |  |
|  | MH-1.7.0 / MH-1.7.1 | **MH-1.7.0 / MH-1.7.1** |  | 2026-05-05 | 2026-05-25 |  |  |
| A39750 |  | Excavation | 4d | 2026-05-05 | 2026-05-09 | A74120, A1190 | 35d |
| A39760 |  | Pipe Laying | 8d | 2026-05-10 | 2026-05-18 | A39750 | 80d |
| A39770 |  | Install Manhole | 4d | 2026-05-10 | 2026-05-13 | A39750 | 86d |
| A39780 |  | Testing & Inspection | 2d | 2026-05-19 | 2026-05-20 | A39760 | 80d |
| A39790 |  | Backfilling & Compaction | 4d | 2026-05-21 | 2026-05-25 | A39780, A39770 | 80d |
|  | MH-1.7.1 / MH-1.7.2 | **MH-1.7.1 / MH-1.7.2** |  | 2026-05-10 | 2026-05-30 |  |  |
| A39800 |  | Excavation | 4d | 2026-05-10 | 2026-05-13 | A39750, A1190 | 35d |
| A39810 |  | Pipe Laying | 8d | 2026-05-14 | 2026-05-23 | A39800 | 80d |
| A39820 |  | Install Manhole | 4d | 2026-05-14 | 2026-05-18 | A39800 | 86d |
| A39830 |  | Testing & Inspection | 2d | 2026-05-24 | 2026-05-25 | A39810 | 80d |
| A39840 |  | Backfilling & Compaction | 4d | 2026-05-26 | 2026-05-30 | A39830, A39820, A39790 | 80d |
|  | MH-1.7.1.0 / MH-1.7.1.1 | **MH-1.7.1.0 / MH-1.7.1.1** |  | 2026-05-14 | 2026-06-03 |  |  |
| A39850 |  | Excavation | 4d | 2026-05-14 | 2026-05-18 | A39800, A1190 | 35d |
| A39860 |  | Pipe Laying | 8d | 2026-05-19 | 2026-05-27 | A39850 | 80d |
| A39870 |  | Install Manhole | 4d | 2026-05-19 | 2026-05-23 | A39850 | 86d |
| A39880 |  | Testing & Inspection | 2d | 2026-05-28 | 2026-05-30 | A39860 | 80d |
| A39890 |  | Backfilling & Compaction | 4d | 2026-05-31 | 2026-06-03 | A39880, A39870, A39840 | 80d |
|  | MH-1.7.10 / MH-1.7.11 | **MH-1.7.10 / MH-1.7.11** |  | 2026-05-19 | 2026-06-08 |  |  |
| A39900 |  | Excavation | 4d | 2026-05-19 | 2026-05-23 | A39850, A1190 | 35d |
| A39910 |  | Pipe Laying | 8d | 2026-05-24 | 2026-06-01 | A39900 | 80d |
| A39920 |  | Install Manhole | 4d | 2026-05-24 | 2026-05-27 | A39900 | 86d |
| A39930 |  | Testing & Inspection | 2d | 2026-06-02 | 2026-06-03 | A39910 | 80d |
| A39940 |  | Backfilling & Compaction | 4d | 2026-06-04 | 2026-06-08 | A39930, A39920, A39890 | 80d |
|  | MH-1.7.10.0 / MH-1.7.10.1 | **MH-1.7.10.0 / MH-1.7.10.1** |  | 2026-05-24 | 2026-06-13 |  |  |
| A39950 |  | Excavation | 4d | 2026-05-24 | 2026-05-27 | A39900, A1190 | 35d |
| A39960 |  | Pipe Laying | 8d | 2026-05-28 | 2026-06-06 | A39950 | 80d |
| A39970 |  | Install Manhole | 4d | 2026-05-28 | 2026-06-01 | A39950 | 86d |
| A39980 |  | Testing & Inspection | 2d | 2026-06-07 | 2026-06-08 | A39960 | 80d |
| A39990 |  | Backfilling & Compaction | 4d | 2026-06-09 | 2026-06-13 | A39980, A39970, A39940 | 80d |
|  | MH-1.7.11 / MH-1.7.12 | **MH-1.7.11 / MH-1.7.12** |  | 2026-05-28 | 2026-06-17 |  |  |
| A40000 |  | Excavation | 4d | 2026-05-28 | 2026-06-01 | A39950, A1190 | 35d |
| A40010 |  | Pipe Laying | 8d | 2026-06-02 | 2026-06-10 | A40000 | 80d |
| A40020 |  | Install Manhole | 4d | 2026-06-02 | 2026-06-06 | A40000 | 86d |
| A40030 |  | Testing & Inspection | 2d | 2026-06-11 | 2026-06-13 | A40010 | 80d |
| A40040 |  | Backfilling & Compaction | 4d | 2026-06-14 | 2026-06-17 | A40030, A40020, A39990 | 80d |
|  | MH-1.7.2 / MH-1.7.3 | **MH-1.7.2 / MH-1.7.3** |  | 2026-06-02 | 2026-06-22 |  |  |
| A40050 |  | Excavation | 4d | 2026-06-02 | 2026-06-06 | A40000, A1190 | 35d |
| A40060 |  | Pipe Laying | 8d | 2026-06-07 | 2026-06-15 | A40050 | 80d |
| A40070 |  | Install Manhole | 4d | 2026-06-07 | 2026-06-10 | A40050 | 86d |
| A40080 |  | Testing & Inspection | 2d | 2026-06-16 | 2026-06-17 | A40060 | 80d |
| A40090 |  | Backfilling & Compaction | 4d | 2026-06-18 | 2026-06-22 | A40080, A40070, A40040 | 80d |
|  | MH-1.7.2.0 / MH-1.7.2.1 | **MH-1.7.2.0 / MH-1.7.2.1** |  | 2026-06-07 | 2026-06-27 |  |  |
| A40100 |  | Excavation | 4d | 2026-06-07 | 2026-06-10 | A40050, A1190 | 35d |
| A40110 |  | Pipe Laying | 8d | 2026-06-11 | 2026-06-20 | A40100 | 80d |
| A40120 |  | Install Manhole | 4d | 2026-06-11 | 2026-06-15 | A40100 | 86d |
| A40130 |  | Testing & Inspection | 2d | 2026-06-21 | 2026-06-22 | A40110 | 80d |
| A40140 |  | Backfilling & Compaction | 4d | 2026-06-23 | 2026-06-27 | A40130, A40120, A40090 | 80d |
|  | MH-1.7.3 / MH-1.7.4 | **MH-1.7.3 / MH-1.7.4** |  | 2026-06-11 | 2026-07-01 |  |  |
| A40150 |  | Excavation | 4d | 2026-06-11 | 2026-06-15 | A40100, A1190 | 35d |
| A40160 |  | Pipe Laying | 8d | 2026-06-16 | 2026-06-24 | A40150 | 80d |
| A40170 |  | Install Manhole | 4d | 2026-06-16 | 2026-06-20 | A40150 | 86d |
| A40180 |  | Testing & Inspection | 2d | 2026-06-25 | 2026-06-27 | A40160 | 80d |
| A40190 |  | Backfilling & Compaction | 4d | 2026-06-28 | 2026-07-01 | A40180, A40170, A40140 | 80d |
|  | MH-1.7.3.0 / MH-1.7.3.1 | **MH-1.7.3.0 / MH-1.7.3.1** |  | 2026-06-16 | 2026-07-06 |  |  |
| A40200 |  | Excavation | 4d | 2026-06-16 | 2026-06-20 | A40150, A1190 | 35d |
| A40210 |  | Pipe Laying | 8d | 2026-06-21 | 2026-06-29 | A40200 | 80d |
| A40220 |  | Install Manhole | 4d | 2026-06-21 | 2026-06-24 | A40200 | 86d |
| A40230 |  | Testing & Inspection | 2d | 2026-06-30 | 2026-07-01 | A40210 | 80d |
| A40240 |  | Backfilling & Compaction | 4d | 2026-07-02 | 2026-07-06 | A40230, A40220, A40190 | 80d |
|  | MH-1.7.4 / MH-1.7.5 | **MH-1.7.4 / MH-1.7.5** |  | 2026-06-21 | 2026-07-11 |  |  |
| A40250 |  | Excavation | 4d | 2026-06-21 | 2026-06-24 | A40200, A1190 | 35d |
| A40260 |  | Pipe Laying | 8d | 2026-06-25 | 2026-07-04 | A40250 | 80d |
| A40270 |  | Install Manhole | 4d | 2026-06-25 | 2026-06-29 | A40250 | 86d |
| A40280 |  | Testing & Inspection | 2d | 2026-07-05 | 2026-07-06 | A40260 | 80d |

| ID | WBS | Task | Duration | Start | Finish | Predecessors | Total float |
| --- | --- | --- | --- | --- | --- | --- | --- |
| A40290 |  | Backfilling & Compaction | 4d | 2026-07-07 | 2026-07-11 | A40280, A40270, A40240 | 80d |
|  | MH-1.7.4.0 / MH-1.7.4.1 | **MH-1.7.4.0 / MH-1.7.4.1** |  | 2026-06-25 | 2026-07-15 |  |  |
| A40300 |  | Excavation | 4d | 2026-06-25 | 2026-06-29 | A40250, A1190 | 35d |
| A40310 |  | Pipe Laying | 8d | 2026-06-30 | 2026-07-08 | A40300 | 80d |
| A40320 |  | Install Manhole | 4d | 2026-06-30 | 2026-07-04 | A40300 | 86d |
| A40330 |  | Testing & Inspection | 2d | 2026-07-09 | 2026-07-11 | A40310 | 80d |
| A40340 |  | Backfilling & Compaction | 4d | 2026-07-12 | 2026-07-15 | A40330, A40320, A40290 | 80d |
|  | MH-1.7.5 / MH-1.7.6 | **MH-1.7.5 / MH-1.7.6** |  | 2026-06-30 | 2026-07-20 |  |  |
| A40350 |  | Excavation | 4d | 2026-06-30 | 2026-07-04 | A40300, A1190 | 35d |
| A40360 |  | Pipe Laying | 4d | 2026-07-05 | 2026-07-08 | A40350 | 84d |
| A40370 |  | Install Manhole | 4d | 2026-07-05 | 2026-07-08 | A40350 | 86d |
| A40380 |  | Testing & Inspection | 2d | 2026-07-09 | 2026-07-11 | A40360 | 84d |
| A40390 |  | Backfilling & Compaction | 4d | 2026-07-16 | 2026-07-20 | A40380, A40370, A40340 | 80d |
|  | MH-1.7.5.0 / MH-1.7.5.1 | **MH-1.7.5.0 / MH-1.7.5.1** |  | 2026-07-05 | 2026-07-25 |  |  |
| A40400 |  | Excavation | 4d | 2026-07-05 | 2026-07-08 | A40350, A1190 | 35d |
| A40410 |  | Pipe Laying | 8d | 2026-07-09 | 2026-07-18 | A40400 | 80d |
| A40420 |  | Install Manhole | 4d | 2026-07-09 | 2026-07-13 | A40400 | 86d |
| A40430 |  | Testing & Inspection | 2d | 2026-07-19 | 2026-07-20 | A40410 | 80d |
| A40440 |  | Backfilling & Compaction | 4d | 2026-07-21 | 2026-07-25 | A40430, A40420, A40390 | 80d |
|  | MH-1.7.6 / MH-1.7.7 | **MH-1.7.6 / MH-1.7.7** |  | 2026-07-09 | 2026-07-29 |  |  |
| A40450 |  | Excavation | 4d | 2026-07-09 | 2026-07-13 | A40400, A1190 | 35d |
| A40460 |  | Pipe Laying | 8d | 2026-07-14 | 2026-07-22 | A40450 | 80d |
| A40470 |  | Install Manhole | 4d | 2026-07-14 | 2026-07-18 | A40450 | 86d |
| A40480 |  | Testing & Inspection | 2d | 2026-07-23 | 2026-07-25 | A40460 | 80d |
| A40490 |  | Backfilling & Compaction | 4d | 2026-07-26 | 2026-07-29 | A40480, A40470, A40440 | 80d |
|  | MH-1.7.6.0 / MH-1.7.6.1 | **MH-1.7.6.0 / MH-1.7.6.1** |  | 2026-07-14 | 2026-08-03 |  |  |
| A40500 |  | Excavation | 4d | 2026-07-14 | 2026-07-18 | A40450, A1190 | 35d |
| A40510 |  | Pipe Laying | 8d | 2026-07-19 | 2026-07-27 | A40500 | 80d |
| A40520 |  | Install Manhole | 4d | 2026-07-19 | 2026-07-22 | A40500 | 86d |
| A40530 |  | Testing & Inspection | 2d | 2026-07-28 | 2026-07-29 | A40510 | 80d |
| A40540 |  | Backfilling & Compaction | 4d | 2026-07-30 | 2026-08-03 | A40530, A40520, A40490 | 80d |
|  | MH-1.7.7 / MH-1.7.8 | **MH-1.7.7 / MH-1.7.8** |  | 2026-07-19 | 2026-08-08 |  |  |
| A40550 |  | Excavation | 4d | 2026-07-19 | 2026-07-22 | A40500, A1190 | 35d |
| A40560 |  | Pipe Laying | 8d | 2026-07-23 | 2026-08-01 | A40550 | 80d |
| A40570 |  | Install Manhole | 4d | 2026-07-23 | 2026-07-27 | A40550 | 86d |
| A40580 |  | Testing & Inspection | 2d | 2026-08-02 | 2026-08-03 | A40560 | 80d |
| A40590 |  | Backfilling & Compaction | 4d | 2026-08-04 | 2026-08-08 | A40580, A40570, A40540 | 80d |
|  | MH-1.7.7.0 / MH-1.7.7.1 | **MH-1.7.7.0 / MH-1.7.7.1** |  | 2026-07-23 | 2026-08-12 |  |  |
| A40600 |  | Excavation | 4d | 2026-07-23 | 2026-07-27 | A40550, A1190 | 35d |
| A40610 |  | Pipe Laying | 8d | 2026-07-28 | 2026-08-05 | A40600 | 80d |
| A40620 |  | Install Manhole | 4d | 2026-07-28 | 2026-08-01 | A40600 | 86d |
| A40630 |  | Testing & Inspection | 2d | 2026-08-06 | 2026-08-08 | A40610 | 80d |
| A40640 |  | Backfilling & Compaction | 4d | 2026-08-09 | 2026-08-12 | A40630, A40620, A40590 | 80d |
|  | MH-1.7.8 / MH-1.7.9 | **MH-1.7.8 / MH-1.7.9** |  | 2026-07-28 | 2026-08-17 |  |  |
| A40650 |  | Excavation | 4d | 2026-07-28 | 2026-08-01 | A40600, A1190 | 35d |
| A40660 |  | Pipe Laying | 8d | 2026-08-02 | 2026-08-10 | A40650 | 80d |
| A40670 |  | Install Manhole | 4d | 2026-08-02 | 2026-08-05 | A40650 | 86d |
| A40680 |  | Testing & Inspection | 2d | 2026-08-11 | 2026-08-12 | A40660 | 80d |
| A40690 |  | Backfilling & Compaction | 4d | 2026-08-13 | 2026-08-17 | A40680, A40670, A40640 | 80d |
|  | MH-1.7.8.0 / MH-1.7.8.1 | **MH-1.7.8.0 / MH-1.7.8.1** |  | 2026-08-02 | 2026-08-22 |  |  |
| A40700 |  | Excavation | 4d | 2026-08-02 | 2026-08-05 | A40650, A1190 | 35d |
| A40710 |  | Pipe Laying | 8d | 2026-08-06 | 2026-08-15 | A40700 | 80d |
| A40720 |  | Install Manhole | 4d | 2026-08-06 | 2026-08-10 | A40700 | 86d |
| A40730 |  | Testing & Inspection | 2d | 2026-08-16 | 2026-08-17 | A40710 | 80d |
| A40740 |  | Backfilling & Compaction | 4d | 2026-08-18 | 2026-08-22 | A40730, A40720, A40690 | 80d |
|  | MH-1.7.9 / MH-1.7.10 | **MH-1.7.9 / MH-1.7.10** |  | 2026-08-06 | 2026-08-26 |  |  |
| A40750 |  | Excavation | 4d | 2026-08-06 | 2026-08-10 | A40700, A1190 | 35d |
| A40760 |  | Pipe Laying | 8d | 2026-08-11 | 2026-08-19 | A40750 | 80d |
| A40770 |  | Install Manhole | 4d | 2026-08-11 | 2026-08-15 | A40750 | 86d |
| A40780 |  | Testing & Inspection | 2d | 2026-08-20 | 2026-08-22 | A40760 | 80d |
| A40790 |  | Backfilling & Compaction | 4d | 2026-08-23 | 2026-08-26 | A40780, A40770, A40740 | 80d |
|  | MH-1.7.9.0 / MH-1.7.9.1 | **MH-1.7.9.0 / MH-1.7.9.1** |  | 2026-08-11 | 2026-08-31 |  |  |
| A40800 |  | Excavation | 4d | 2026-08-11 | 2026-08-15 | A40750, A1190 | 35d |
| A40810 |  | Pipe Laying | 8d | 2026-08-16 | 2026-08-24 | A40800 | 80d |
| A40820 |  | Install Manhole | 4d | 2026-08-16 | 2026-08-19 | A40800 | 86d |
| A40830 |  | Testing & Inspection | 2d | 2026-08-25 | 2026-08-26 | A40810 | 80d |
| A40840 |  | Backfilling & Compaction | 4d | 2026-08-27 | 2026-08-31 | A40830, A40820, A40790 | 80d |
|  | MH-2.19.2 / MH-2.19.3 | **MH-2.19.2 / MH-2.19.3** |  | 2026-08-16 | 2026-09-05 |  |  |
| A40850 |  | Excavation | 4d | 2026-08-16 | 2026-08-19 | A40800, A1190 | 35d |
| A40860 |  | Pipe Laying | 8d | 2026-08-20 | 2026-08-29 | A40850 | 80d |

| ID | WBS | Task | Duration | Start | Finish | Predecessors | Total float |
| --- | --- | --- | --- | --- | --- | --- | --- |
| A40870 |  | Install Manhole | 4d | 2026-08-20 | 2026-08-24 | A40850 | 86d |
| A40880 |  | Testing & Inspection | 2d | 2026-08-30 | 2026-08-31 | A40860 | 80d |
| A40890 |  | Backfilling & Compaction | 4d | 2026-09-01 | 2026-09-05 | A40880, A40870, A40840 | 80d |
|  | MH-2.19.3 / MH-2.19.4 | **MH-2.19.3 / MH-2.19.4** |  | 2026-08-20 | 2026-09-09 |  |  |
| A40900 |  | Excavation | 4d | 2026-08-20 | 2026-08-24 | A40850, A1190 | 35d |
| A40910 |  | Pipe Laying | 8d | 2026-08-25 | 2026-09-02 | A40900 | 80d |
| A40920 |  | Install Manhole | 4d | 2026-08-25 | 2026-08-29 | A40900 | 86d |
| A40930 |  | Testing & Inspection | 2d | 2026-09-03 | 2026-09-05 | A40910 | 80d |
| A40940 |  | Backfilling & Compaction | 4d | 2026-09-06 | 2026-09-09 | A40930, A40920, A40890 | 80d |
|  | MH-2.19.3.0 / MH-2.19.3.1 | **MH-2.19.3.0 / MH-2.19.3.1** |  | 2026-08-25 | 2026-09-14 |  |  |
| A40950 |  | Excavation | 4d | 2026-08-25 | 2026-08-29 | A40900, A1190 | 35d |
| A40960 |  | Pipe Laying | 8d | 2026-08-30 | 2026-09-07 | A40950 | 80d |
| A40970 |  | Install Manhole | 4d | 2026-08-30 | 2026-09-02 | A40950 | 86d |
| A40980 |  | Testing & Inspection | 2d | 2026-09-08 | 2026-09-09 | A40960 | 80d |
| A40990 |  | Backfilling & Compaction | 4d | 2026-09-10 | 2026-09-14 | A40980, A40970, A40940 | 80d |
|  | MH-2.19.4 / MH-2.19.5 | **MH-2.19.4 / MH-2.19.5** |  | 2026-08-30 | 2026-09-19 |  |  |
| A41000 |  | Excavation | 4d | 2026-08-30 | 2026-09-02 | A40950, A1190 | 35d |
| A41010 |  | Pipe Laying | 8d | 2026-09-03 | 2026-09-12 | A41000 | 80d |
| A41020 |  | Install Manhole | 4d | 2026-09-03 | 2026-09-07 | A41000 | 86d |
| A41030 |  | Testing & Inspection | 2d | 2026-09-13 | 2026-09-14 | A41010 | 80d |
| A41040 |  | Backfilling & Compaction | 4d | 2026-09-15 | 2026-09-19 | A41030, A41020, A40990 | 80d |
|  | MH-2.19.4.0 / MH-2.19.4.1 | **MH-2.19.4.0 / MH-2.19.4.1** |  | 2026-09-03 | 2026-09-23 |  |  |
| A41050 |  | Excavation | 4d | 2026-09-03 | 2026-09-07 | A41000, A1190 | 35d |
| A41060 |  | Pipe Laying | 8d | 2026-09-08 | 2026-09-16 | A41050 | 80d |
| A41070 |  | Install Manhole | 4d | 2026-09-08 | 2026-09-12 | A41050 | 86d |
| A41080 |  | Testing & Inspection | 2d | 2026-09-17 | 2026-09-19 | A41060 | 80d |
| A41090 |  | Backfilling & Compaction | 4d | 2026-09-20 | 2026-09-23 | A41080, A41070, A41040 | 80d |
|  | MH-2.19.5 / MH-2.19.6 | **MH-2.19.5 / MH-2.19.6** |  | 2026-09-08 | 2026-09-28 |  |  |
| A41100 |  | Excavation | 4d | 2026-09-08 | 2026-09-12 | A41050, A1190 | 35d |
| A41110 |  | Pipe Laying | 8d | 2026-09-13 | 2026-09-21 | A41100 | 80d |
| A41120 |  | Install Manhole | 4d | 2026-09-13 | 2026-09-16 | A41100 | 86d |
| A41130 |  | Testing & Inspection | 2d | 2026-09-22 | 2026-09-23 | A41110 | 80d |
| A41140 |  | Backfilling & Compaction | 4d | 2026-09-24 | 2026-09-28 | A41130, A41120, A41090 | 80d |
|  | MH-2.19.5.0 / MH-2.19.5.1 | **MH-2.19.5.0 / MH-2.19.5.1** |  | 2026-09-13 | 2026-10-03 |  |  |
| A41150 |  | Excavation | 4d | 2026-09-13 | 2026-09-16 | A41100, A1190 | 35d |
| A41160 |  | Pipe Laying | 8d | 2026-09-17 | 2026-09-26 | A41150 | 80d |
| A41170 |  | Install Manhole | 4d | 2026-09-17 | 2026-09-21 | A41150 | 86d |
| A41180 |  | Testing & Inspection | 2d | 2026-09-27 | 2026-09-28 | A41160 | 80d |
| A41190 |  | Backfilling & Compaction | 4d | 2026-09-29 | 2026-10-03 | A41180, A41170, A41140 | 80d |
|  | MH-2.19.6 / MH-2.19.7 | **MH-2.19.6 / MH-2.19.7** |  | 2026-09-17 | 2026-10-07 |  |  |
| A41200 |  | Excavation | 4d | 2026-09-17 | 2026-09-21 | A41150, A1190 | 35d |
| A41210 |  | Pipe Laying | 8d | 2026-09-22 | 2026-09-30 | A41200 | 80d |
| A41220 |  | Install Manhole | 4d | 2026-09-22 | 2026-09-26 | A41200 | 86d |
| A41230 |  | Testing & Inspection | 2d | 2026-10-01 | 2026-10-03 | A41210 | 80d |
| A41240 |  | Backfilling & Compaction | 4d | 2026-10-04 | 2026-10-07 | A41230, A41220, A41190 | 80d |
|  | MH-2.19.6.0 / MH-2.19.6.1 | **MH-2.19.6.0 / MH-2.19.6.1** |  | 2026-09-22 | 2026-10-12 |  |  |
| A41250 |  | Excavation | 4d | 2026-09-22 | 2026-09-26 | A41200, A1190 | 35d |
| A41260 |  | Pipe Laying | 8d | 2026-09-27 | 2026-10-05 | A41250 | 80d |
| A41270 |  | Install Manhole | 4d | 2026-09-27 | 2026-09-30 | A41250 | 86d |
| A41280 |  | Testing & Inspection | 2d | 2026-10-06 | 2026-10-07 | A41260 | 80d |
| A41290 |  | Backfilling & Compaction | 4d | 2026-10-08 | 2026-10-12 | A41280, A41270, A41240 | 80d |
|  | MH-2.19.7 / MH-2.19.8 | **MH-2.19.7 / MH-2.19.8** |  | 2026-09-27 | 2026-10-17 |  |  |
| A41300 |  | Excavation | 4d | 2026-09-27 | 2026-09-30 | A41250, A1190 | 35d |
| A41310 |  | Pipe Laying | 8d | 2026-10-01 | 2026-10-10 | A41300 | 80d |
| A41320 |  | Install Manhole | 4d | 2026-10-01 | 2026-10-05 | A41300 | 86d |
| A41330 |  | Testing & Inspection | 2d | 2026-10-11 | 2026-10-12 | A41310 | 80d |
| A41340 |  | Backfilling & Compaction | 4d | 2026-10-13 | 2026-10-17 | A41330, A41320, A41290 | 80d |
|  | LR 03 | **LR 03** |  | 2026-10-04 | 2026-11-24 |  |  |
|  | MH-1.10.10 / MH-1.10.11 | **MH-1.10.10 / MH-1.10.11** |  | 2026-10-04 | 2026-10-07 |  |  |
| A41350 |  | Excavation | 1d | 2026-10-04 | 2026-10-04 | A72970, A1190 | 5d |
| A41360 |  | Pipe Laying | 1d | 2026-10-05 | 2026-10-05 | A41350 | 5d |
| A41370 |  | Install Manhole | 1d | 2026-10-05 | 2026-10-05 | A41350 | 6d |
| A41380 |  | Testing & Inspection | 1d | 2026-10-06 | 2026-10-06 | A41360 | 5d |
| A41390 |  | Backfilling & Compaction | 1d | 2026-10-07 | 2026-10-07 | A41380, A41370 | 5d |
|  | MH-1.10.11 / MH-1.10.12 | **MH-1.10.11 / MH-1.10.12** |  | 2026-10-05 | 2026-10-08 |  |  |
| A41400 |  | Excavation | 1d | 2026-10-05 | 2026-10-05 | A41350, A1190 | 5d |
| A41410 |  | Pipe Laying | 1d | 2026-10-06 | 2026-10-06 | A41400 | 5d |
| A41420 |  | Install Manhole | 1d | 2026-10-06 | 2026-10-06 | A41400 | 6d |
| A41430 |  | Testing & Inspection | 1d | 2026-10-07 | 2026-10-07 | A41410 | 5d |
| A41440 |  | Backfilling & Compaction | 1d | 2026-10-08 | 2026-10-08 | A41430, A41420, A41390 | 5d |

| ID | WBS | Task | Duration | Start | Finish | Predecessors | Total float |
| --- | --- | --- | --- | --- | --- | --- | --- |
|  | MH-1.10.11.0 / MH-1.10.11.1 | **MH-1.10.11.0 / MH-1.10.11.1** |  | 2026-10-06 | 2026-10-10 |  |  |
| A41450 |  | Excavation | 1d | 2026-10-06 | 2026-10-06 | A41400, A1190 | 5d |
| A41460 |  | Pipe Laying | 1d | 2026-10-07 | 2026-10-07 | A41450 | 5d |
| A41470 |  | Install Manhole | 1d | 2026-10-07 | 2026-10-07 | A41450 | 6d |
| A41480 |  | Testing & Inspection | 1d | 2026-10-08 | 2026-10-08 | A41460 | 5d |
| A41490 |  | Backfilling & Compaction | 1d | 2026-10-10 | 2026-10-10 | A41480, A41470, A41440 | 5d |
|  | MH-1.10.12 / MH-1.10.13 | **MH-1.10.12 / MH-1.10.13** |  | 2026-10-07 | 2026-10-11 |  |  |
| A41500 |  | Excavation | 1d | 2026-10-07 | 2026-10-07 | A41450, A1190 | 5d |
| A41510 |  | Pipe Laying | 1d | 2026-10-08 | 2026-10-08 | A41500 | 5d |
| A41520 |  | Install Manhole | 1d | 2026-10-08 | 2026-10-08 | A41500 | 6d |
| A41530 |  | Testing & Inspection | 1d | 2026-10-10 | 2026-10-10 | A41510 | 5d |
| A41540 |  | Backfilling & Compaction | 1d | 2026-10-11 | 2026-10-11 | A41530, A41520, A41490 | 5d |
|  | MH-1.10.9 / MH-1.10.10 | **MH-1.10.9 / MH-1.10.10** |  | 2026-10-08 | 2026-10-12 |  |  |
| A41550 |  | Excavation | 1d | 2026-10-08 | 2026-10-08 | A41500, A1190 | 5d |
| A41560 |  | Pipe Laying | 1d | 2026-10-10 | 2026-10-10 | A41550 | 5d |
| A41570 |  | Install Manhole | 1d | 2026-10-10 | 2026-10-10 | A41550 | 6d |
| A41580 |  | Testing & Inspection | 1d | 2026-10-11 | 2026-10-11 | A41560 | 5d |
| A41590 |  | Backfilling & Compaction | 1d | 2026-10-12 | 2026-10-12 | A41580, A41570, A41540 | 5d |
|  | MH-1.22 / MH-1.22.1 | **MH-1.22 / MH-1.22.1** |  | 2026-10-10 | 2026-10-13 |  |  |
| A41600 |  | Excavation | 1d | 2026-10-10 | 2026-10-10 | A41550, A1190 | 5d |
| A41610 |  | Pipe Laying | 1d | 2026-10-11 | 2026-10-11 | A41600 | 5d |
| A41620 |  | Install Manhole | 1d | 2026-10-11 | 2026-10-11 | A41600 | 6d |
| A41630 |  | Testing & Inspection | 1d | 2026-10-12 | 2026-10-12 | A41610 | 5d |
| A41640 |  | Backfilling & Compaction | 1d | 2026-10-13 | 2026-10-13 | A41630, A41620, A41590 | 5d |
|  | MH-1.22 / MH-1.23 | **MH-1.22 / MH-1.23** |  | 2026-10-11 | 2026-10-14 |  |  |
| A41650 |  | Excavation | 1d | 2026-10-11 | 2026-10-11 | A41600, A1190 | 5d |
| A41660 |  | Pipe Laying | 1d | 2026-10-12 | 2026-10-12 | A41650 | 5d |
| A41670 |  | Install Manhole | 1d | 2026-10-12 | 2026-10-12 | A41650 | 6d |
| A41680 |  | Testing & Inspection | 1d | 2026-10-13 | 2026-10-13 | A41660 | 5d |
| A41690 |  | Backfilling & Compaction | 1d | 2026-10-14 | 2026-10-14 | A41680, A41670, A41640 | 5d |
|  | MH-1.23 / MH-1.24 | **MH-1.23 / MH-1.24** |  | 2026-10-12 | 2026-10-15 |  |  |
| A41700 |  | Excavation | 1d | 2026-10-12 | 2026-10-12 | A41650, A1190 | 5d |
| A41710 |  | Pipe Laying | 1d | 2026-10-13 | 2026-10-13 | A41700 | 5d |
| A41720 |  | Install Manhole | 1d | 2026-10-13 | 2026-10-13 | A41700 | 6d |
| A41730 |  | Testing & Inspection | 1d | 2026-10-14 | 2026-10-14 | A41710 | 5d |
| A41740 |  | Backfilling & Compaction | 1d | 2026-10-15 | 2026-10-15 | A41730, A41720, A41690 | 5d |
|  | MH-2.21.10 / MH-2.21.11 | **MH-2.21.10 / MH-2.21.11** |  | 2026-10-13 | 2026-10-17 |  |  |
| A41750 |  | Excavation | 1d | 2026-10-13 | 2026-10-13 | A41700, A1190 | 5d |
| A41760 |  | Pipe Laying | 1d | 2026-10-14 | 2026-10-14 | A41750 | 5d |
| A41770 |  | Install Manhole | 1d | 2026-10-14 | 2026-10-14 | A41750 | 6d |
| A41780 |  | Testing & Inspection | 1d | 2026-10-15 | 2026-10-15 | A41760 | 5d |
| A41790 |  | Backfilling & Compaction | 1d | 2026-10-17 | 2026-10-17 | A41780, A41770, A41740 | 5d |
|  | MH-2.21.8 / MH-2.21.9 | **MH-2.21.8 / MH-2.21.9** |  | 2026-10-14 | 2026-10-18 |  |  |
| A41800 |  | Excavation | 1d | 2026-10-14 | 2026-10-14 | A41750, A1190 | 5d |
| A41810 |  | Pipe Laying | 1d | 2026-10-15 | 2026-10-15 | A41800 | 5d |
| A41820 |  | Install Manhole | 1d | 2026-10-15 | 2026-10-15 | A41800 | 6d |
| A41830 |  | Testing & Inspection | 1d | 2026-10-17 | 2026-10-17 | A41810 | 5d |
| A41840 |  | Backfilling & Compaction | 1d | 2026-10-18 | 2026-10-18 | A41830, A41820, A41790 | 5d |
|  | MH-2.21.8.0 / MH-2.21.8.1 | **MH-2.21.8.0 / MH-2.21.8.1** |  | 2026-10-15 | 2026-10-19 |  |  |
| A41850 |  | Excavation | 1d | 2026-10-15 | 2026-10-15 | A41800, A1190 | 5d |
| A41860 |  | Pipe Laying | 1d | 2026-10-17 | 2026-10-17 | A41850 | 5d |
| A41870 |  | Install Manhole | 1d | 2026-10-17 | 2026-10-17 | A41850 | 6d |
| A41880 |  | Testing & Inspection | 1d | 2026-10-18 | 2026-10-18 | A41860 | 5d |
| A41890 |  | Backfilling & Compaction | 1d | 2026-10-19 | 2026-10-19 | A41880, A41870, A41840 | 5d |
|  | MH-2.21.9 / MH-2.21.10 | **MH-2.21.9 / MH-2.21.10** |  | 2026-10-17 | 2026-10-20 |  |  |
| A41900 |  | Excavation | 1d | 2026-10-17 | 2026-10-17 | A41850, A1190 | 5d |
| A41910 |  | Pipe Laying | 1d | 2026-10-18 | 2026-10-18 | A41900 | 5d |
| A41920 |  | Install Manhole | 1d | 2026-10-18 | 2026-10-18 | A41900 | 6d |
| A41930 |  | Testing & Inspection | 1d | 2026-10-19 | 2026-10-19 | A41910 | 5d |
| A41940 |  | Backfilling & Compaction | 1d | 2026-10-20 | 2026-10-20 | A41930, A41920, A41890 | 5d |
|  | MH-2.21.9.0 / MH-2.21.9.1 | **MH-2.21.9.0 / MH-2.21.9.1** |  | 2026-10-18 | 2026-10-21 |  |  |
| A41950 |  | Excavation | 1d | 2026-10-18 | 2026-10-18 | A41900, A1190 | 5d |
| A41960 |  | Pipe Laying | 1d | 2026-10-19 | 2026-10-19 | A41950 | 5d |
| A41970 |  | Install Manhole | 1d | 2026-10-19 | 2026-10-19 | A41950 | 6d |
| A41980 |  | Testing & Inspection | 1d | 2026-10-20 | 2026-10-20 | A41960 | 5d |
| A41990 |  | Backfilling & Compaction | 1d | 2026-10-21 | 2026-10-21 | A41980, A41970, A41940 | 5d |
|  | MH-2.26 / MH-2.27 | **MH-2.26 / MH-2.27** |  | 2026-10-19 | 2026-10-22 |  |  |
| A42000 |  | Excavation | 1d | 2026-10-19 | 2026-10-19 | A41950, A1190 | 5d |
| A42010 |  | Pipe Laying | 1d | 2026-10-20 | 2026-10-20 | A42000 | 5d |
| A42020 |  | Install Manhole | 1d | 2026-10-20 | 2026-10-20 | A42000 | 6d |

| ID | WBS | Task | Duration | Start | Finish | Predecessors | Total float |
| --- | --- | --- | --- | --- | --- | --- | --- |
| A42030 |  | Testing & Inspection | 1d | 2026-10-21 | 2026-10-21 | A42010 | 5d |
| A42040 |  | Backfilling & Compaction | 1d | 2026-10-22 | 2026-10-22 | A42030, A42020, A41990 | 5d |
|  | MH-2.26.0 / MH-2.26.1 | **MH-2.26.0 / MH-2.26.1** |  | 2026-10-20 | 2026-10-24 |  |  |
| A42050 |  | Excavation | 1d | 2026-10-20 | 2026-10-20 | A42000, A1190 | 5d |
| A42060 |  | Pipe Laying | 1d | 2026-10-21 | 2026-10-21 | A42050 | 5d |
| A42070 |  | Install Manhole | 1d | 2026-10-21 | 2026-10-21 | A42050 | 6d |
| A42080 |  | Testing & Inspection | 1d | 2026-10-22 | 2026-10-22 | A42060 | 5d |
| A42090 |  | Backfilling & Compaction | 1d | 2026-10-24 | 2026-10-24 | A42080, A42070, A42040 | 5d |
|  | MH-2.26.0 / MH-2.26.1A | **MH-2.26.0 / MH-2.26.1A** |  | 2026-10-21 | 2026-10-25 |  |  |
| A42100 |  | Excavation | 1d | 2026-10-21 | 2026-10-21 | A42050, A1190 | 5d |
| A42110 |  | Pipe Laying | 1d | 2026-10-22 | 2026-10-22 | A42100 | 5d |
| A42120 |  | Install Manhole | 1d | 2026-10-22 | 2026-10-22 | A42100 | 6d |
| A42130 |  | Testing & Inspection | 1d | 2026-10-24 | 2026-10-24 | A42110 | 5d |
| A42140 |  | Backfilling & Compaction | 1d | 2026-10-25 | 2026-10-25 | A42130, A42120, A42090 | 5d |
|  | MH-2.26.1 / MH-2.26.2 | **MH-2.26.1 / MH-2.26.2** |  | 2026-10-22 | 2026-10-26 |  |  |
| A42150 |  | Excavation | 1d | 2026-10-22 | 2026-10-22 | A42100, A1190 | 5d |
| A42160 |  | Pipe Laying | 1d | 2026-10-24 | 2026-10-24 | A42150 | 5d |
| A42170 |  | Install Manhole | 1d | 2026-10-24 | 2026-10-24 | A42150 | 6d |
| A42180 |  | Testing & Inspection | 1d | 2026-10-25 | 2026-10-25 | A42160 | 5d |
| A42190 |  | Backfilling & Compaction | 1d | 2026-10-26 | 2026-10-26 | A42180, A42170, A42140 | 5d |
|  | MH-2.27 / MH-2.28 | **MH-2.27 / MH-2.28** |  | 2026-10-24 | 2026-10-27 |  |  |
| A42200 |  | Excavation | 1d | 2026-10-24 | 2026-10-24 | A42150, A1190 | 5d |
| A42210 |  | Pipe Laying | 1d | 2026-10-25 | 2026-10-25 | A42200 | 5d |
| A42220 |  | Install Manhole | 1d | 2026-10-25 | 2026-10-25 | A42200 | 6d |
| A42230 |  | Testing & Inspection | 1d | 2026-10-26 | 2026-10-26 | A42210 | 5d |
| A42240 |  | Backfilling & Compaction | 1d | 2026-10-27 | 2026-10-27 | A42230, A42220, A42190 | 5d |
|  | MH-2.27.0 / MH-2.27.1 | **MH-2.27.0 / MH-2.27.1** |  | 2026-10-25 | 2026-10-28 |  |  |
| A42250 |  | Excavation | 1d | 2026-10-25 | 2026-10-25 | A42200, A1190 | 5d |
| A42260 |  | Pipe Laying | 1d | 2026-10-26 | 2026-10-26 | A42250 | 5d |
| A42270 |  | Install Manhole | 1d | 2026-10-26 | 2026-10-26 | A42250 | 6d |
| A42280 |  | Testing & Inspection | 1d | 2026-10-27 | 2026-10-27 | A42260 | 5d |
| A42290 |  | Backfilling & Compaction | 1d | 2026-10-28 | 2026-10-28 | A42280, A42270, A42240 | 5d |
|  | MH-2.28 / MH-2.29 | **MH-2.28 / MH-2.29** |  | 2026-10-26 | 2026-10-29 |  |  |
| A42300 |  | Excavation | 1d | 2026-10-26 | 2026-10-26 | A42250, A1190 | 5d |
| A42310 |  | Pipe Laying | 1d | 2026-10-27 | 2026-10-27 | A42300 | 5d |
| A42320 |  | Install Manhole | 1d | 2026-10-27 | 2026-10-27 | A42300 | 6d |
| A42330 |  | Testing & Inspection | 1d | 2026-10-28 | 2026-10-28 | A42310 | 5d |
| A42340 |  | Backfilling & Compaction | 1d | 2026-10-29 | 2026-10-29 | A42330, A42320, A42290 | 5d |
|  | MH-2.28.0 / MH-2.28.1 | **MH-2.28.0 / MH-2.28.1** |  | 2026-10-27 | 2026-10-31 |  |  |
| A42350 |  | Excavation | 1d | 2026-10-27 | 2026-10-27 | A42300, A1190 | 5d |
| A42360 |  | Pipe Laying | 1d | 2026-10-28 | 2026-10-28 | A42350 | 5d |
| A42370 |  | Install Manhole | 1d | 2026-10-28 | 2026-10-28 | A42350 | 6d |
| A42380 |  | Testing & Inspection | 1d | 2026-10-29 | 2026-10-29 | A42360 | 5d |
| A42390 |  | Backfilling & Compaction | 1d | 2026-10-31 | 2026-10-31 | A42380, A42370, A42340 | 5d |
|  | MH-2.29 / MH-2.30 | **MH-2.29 / MH-2.30** |  | 2026-10-28 | 2026-11-01 |  |  |
| A42400 |  | Excavation | 1d | 2026-10-28 | 2026-10-28 | A42350, A1190 | 5d |
| A42410 |  | Pipe Laying | 1d | 2026-10-29 | 2026-10-29 | A42400 | 5d |
| A42420 |  | Install Manhole | 1d | 2026-10-29 | 2026-10-29 | A42400 | 6d |
| A42430 |  | Testing & Inspection | 1d | 2026-10-31 | 2026-10-31 | A42410 | 5d |
| A42440 |  | Backfilling & Compaction | 1d | 2026-11-01 | 2026-11-01 | A42430, A42420, A42390 | 5d |
|  | MH-2.29.0 / MH-2.29.1 | **MH-2.29.0 / MH-2.29.1** |  | 2026-10-29 | 2026-11-02 |  |  |
| A42450 |  | Excavation | 1d | 2026-10-29 | 2026-10-29 | A42400, A1190 | 5d |
| A42460 |  | Pipe Laying | 1d | 2026-10-31 | 2026-10-31 | A42450 | 5d |
| A42470 |  | Install Manhole | 1d | 2026-10-31 | 2026-10-31 | A42450 | 6d |
| A42480 |  | Testing & Inspection | 1d | 2026-11-01 | 2026-11-01 | A42460 | 5d |
| A42490 |  | Backfilling & Compaction | 1d | 2026-11-02 | 2026-11-02 | A42480, A42470, A42440 | 5d |
|  | MH-2.30 / MH-2.31 | **MH-2.30 / MH-2.31** |  | 2026-10-31 | 2026-11-03 |  |  |
| A42500 |  | Excavation | 1d | 2026-10-31 | 2026-10-31 | A42450, A1190 | 5d |
| A42510 |  | Pipe Laying | 1d | 2026-11-01 | 2026-11-01 | A42500 | 5d |
| A42520 |  | Install Manhole | 1d | 2026-11-01 | 2026-11-01 | A42500 | 6d |
| A42530 |  | Testing & Inspection | 1d | 2026-11-02 | 2026-11-02 | A42510 | 5d |
| A42540 |  | Backfilling & Compaction | 1d | 2026-11-03 | 2026-11-03 | A42530, A42520, A42490 | 5d |
|  | MH-2.30.0 / MH-2.30.1 | **MH-2.30.0 / MH-2.30.1** |  | 2026-11-01 | 2026-11-04 |  |  |
| A42550 |  | Excavation | 1d | 2026-11-01 | 2026-11-01 | A42500, A1190 | 5d |
| A42560 |  | Pipe Laying | 1d | 2026-11-02 | 2026-11-02 | A42550 | 5d |
| A42570 |  | Install Manhole | 1d | 2026-11-02 | 2026-11-02 | A42550 | 6d |
| A42580 |  | Testing & Inspection | 1d | 2026-11-03 | 2026-11-03 | A42560 | 5d |
| A42590 |  | Backfilling & Compaction | 1d | 2026-11-04 | 2026-11-04 | A42580, A42570, A42540 | 5d |
|  | MH-2.31 / MH-2.32 | **MH-2.31 / MH-2.32** |  | 2026-11-02 | 2026-11-05 |  |  |
| A42600 |  | Excavation | 1d | 2026-11-02 | 2026-11-02 | A42550, A1190 | 5d |

| ID | WBS | Task | Duration | Start | Finish | Predecessors | Total float |
| --- | --- | --- | --- | --- | --- | --- | --- |
| A42610 |  | Pipe Laying | 1d | 2026-11-03 | 2026-11-03 | A42600 | 5d |
| A42620 |  | Install Manhole | 1d | 2026-11-03 | 2026-11-03 | A42600 | 6d |
| A42630 |  | Testing & Inspection | 1d | 2026-11-04 | 2026-11-04 | A42610 | 5d |
| A42640 |  | Backfilling & Compaction | 1d | 2026-11-05 | 2026-11-05 | A42630, A42620, A42590 | 5d |
|  | MH-2.31.0 / MH-2.31.1 | **MH-2.31.0 / MH-2.31.1** |  | 2026-11-03 | 2026-11-07 |  |  |
| A42650 |  | Excavation | 1d | 2026-11-03 | 2026-11-03 | A42600, A1190 | 5d |
| A42660 |  | Pipe Laying | 1d | 2026-11-04 | 2026-11-04 | A42650 | 5d |
| A42670 |  | Install Manhole | 1d | 2026-11-04 | 2026-11-04 | A42650 | 6d |
| A42680 |  | Testing & Inspection | 1d | 2026-11-05 | 2026-11-05 | A42660 | 5d |
| A42690 |  | Backfilling & Compaction | 1d | 2026-11-07 | 2026-11-07 | A42680, A42670, A42640 | 5d |
|  | MH-2.32 / MH-2.33 | **MH-2.32 / MH-2.33** |  | 2026-11-04 | 2026-11-08 |  |  |
| A42700 |  | Excavation | 1d | 2026-11-04 | 2026-11-04 | A42650, A1190 | 5d |
| A42710 |  | Pipe Laying | 1d | 2026-11-05 | 2026-11-05 | A42700 | 5d |
| A42720 |  | Install Manhole | 1d | 2026-11-05 | 2026-11-05 | A42700 | 6d |
| A42730 |  | Testing & Inspection | 1d | 2026-11-07 | 2026-11-07 | A42710 | 5d |
| A42740 |  | Backfilling & Compaction | 1d | 2026-11-08 | 2026-11-08 | A42730, A42720, A42690 | 5d |
|  | MH-2.32.0 / MH-2.32.1 | **MH-2.32.0 / MH-2.32.1** |  | 2026-11-05 | 2026-11-09 |  |  |
| A42750 |  | Excavation | 1d | 2026-11-05 | 2026-11-05 | A42700, A1190 | 5d |
| A42760 |  | Pipe Laying | 1d | 2026-11-07 | 2026-11-07 | A42750 | 5d |
| A42770 |  | Install Manhole | 1d | 2026-11-07 | 2026-11-07 | A42750 | 6d |
| A42780 |  | Testing & Inspection | 1d | 2026-11-08 | 2026-11-08 | A42760 | 5d |
| A42790 |  | Backfilling & Compaction | 1d | 2026-11-09 | 2026-11-09 | A42780, A42770, A42740 | 5d |
|  | MH-2.33 / MH-2.34 | **MH-2.33 / MH-2.34** |  | 2026-11-07 | 2026-11-10 |  |  |
| A42800 |  | Excavation | 1d | 2026-11-07 | 2026-11-07 | A42750, A1190 | 5d |
| A42810 |  | Pipe Laying | 1d | 2026-11-08 | 2026-11-08 | A42800 | 5d |
| A42820 |  | Install Manhole | 1d | 2026-11-08 | 2026-11-08 | A42800 | 6d |
| A42830 |  | Testing & Inspection | 1d | 2026-11-09 | 2026-11-09 | A42810 | 5d |
| A42840 |  | Backfilling & Compaction | 1d | 2026-11-10 | 2026-11-10 | A42830, A42820, A42790 | 5d |
|  | MH-2.5 / MH-2.6 | **MH-2.5 / MH-2.6** |  | 2026-11-08 | 2026-11-11 |  |  |
| A42850 |  | Excavation | 1d | 2026-11-08 | 2026-11-08 | A42800, A1190 | 5d |
| A42860 |  | Pipe Laying | 1d | 2026-11-09 | 2026-11-09 | A42850 | 5d |
| A42870 |  | Install Manhole | 1d | 2026-11-09 | 2026-11-09 | A42850 | 6d |
| A42880 |  | Testing & Inspection | 1d | 2026-11-10 | 2026-11-10 | A42860 | 5d |
| A42890 |  | Backfilling & Compaction | 1d | 2026-11-11 | 2026-11-11 | A42880, A42870, A42840 | 5d |
|  | MH-2.5.0 / MH-2.5.1 | **MH-2.5.0 / MH-2.5.1** |  | 2026-11-09 | 2026-11-12 |  |  |
| A42900 |  | Excavation | 1d | 2026-11-09 | 2026-11-09 | A42850, A1190 | 5d |
| A42910 |  | Pipe Laying | 1d | 2026-11-10 | 2026-11-10 | A42900 | 5d |
| A42920 |  | Install Manhole | 1d | 2026-11-10 | 2026-11-10 | A42900 | 6d |
| A42930 |  | Testing & Inspection | 1d | 2026-11-11 | 2026-11-11 | A42910 | 5d |
| A42940 |  | Backfilling & Compaction | 1d | 2026-11-12 | 2026-11-12 | A42930, A42920, A42890 | 5d |
|  | MH-2.5.1 / MH-2.5.2 | **MH-2.5.1 / MH-2.5.2** |  | 2026-11-10 | 2026-11-14 |  |  |
| A42950 |  | Excavation | 1d | 2026-11-10 | 2026-11-10 | A42900, A1190 | 5d |
| A42960 |  | Pipe Laying | 1d | 2026-11-11 | 2026-11-11 | A42950 | 5d |
| A42970 |  | Install Manhole | 1d | 2026-11-11 | 2026-11-11 | A42950 | 6d |
| A42980 |  | Testing & Inspection | 1d | 2026-11-12 | 2026-11-12 | A42960 | 5d |
| A42990 |  | Backfilling & Compaction | 1d | 2026-11-14 | 2026-11-14 | A42980, A42970, A42940 | 5d |
|  | MH-2.6 / MH-2.7 | **MH-2.6 / MH-2.7** |  | 2026-11-11 | 2026-11-15 |  |  |
| A43000 |  | Excavation | 1d | 2026-11-11 | 2026-11-11 | A42950, A1190 | 5d |
| A43010 |  | Pipe Laying | 1d | 2026-11-12 | 2026-11-12 | A43000 | 5d |
| A43020 |  | Install Manhole | 1d | 2026-11-12 | 2026-11-12 | A43000 | 6d |
| A43030 |  | Testing & Inspection | 1d | 2026-11-14 | 2026-11-14 | A43010 | 5d |
| A43040 |  | Backfilling & Compaction | 1d | 2026-11-15 | 2026-11-15 | A43030, A43020, A42990 | 5d |
|  | MH-2.6.1 / MH-2.6.1A | **MH-2.6.1 / MH-2.6.1A** |  | 2026-11-12 | 2026-11-16 |  |  |
| A43050 |  | Excavation | 1d | 2026-11-12 | 2026-11-12 | A43000, A1190 | 5d |
| A43060 |  | Pipe Laying | 1d | 2026-11-14 | 2026-11-14 | A43050 | 5d |
| A43070 |  | Install Manhole | 1d | 2026-11-14 | 2026-11-14 | A43050 | 6d |
| A43080 |  | Testing & Inspection | 1d | 2026-11-15 | 2026-11-15 | A43060 | 5d |
| A43090 |  | Backfilling & Compaction | 1d | 2026-11-16 | 2026-11-16 | A43080, A43070, A43040 | 5d |
|  | MH-2.7.0 / MH-2.7.1 | **MH-2.7.0 / MH-2.7.1** |  | 2026-11-14 | 2026-11-17 |  |  |
| A43100 |  | Excavation | 1d | 2026-11-14 | 2026-11-14 | A43050, A1190 | 5d |
| A43110 |  | Pipe Laying | 1d | 2026-11-15 | 2026-11-15 | A43100 | 5d |
| A43120 |  | Install Manhole | 1d | 2026-11-15 | 2026-11-15 | A43100 | 6d |
| A43130 |  | Testing & Inspection | 1d | 2026-11-16 | 2026-11-16 | A43110 | 5d |
| A43140 |  | Backfilling & Compaction | 1d | 2026-11-17 | 2026-11-17 | A43130, A43120, A43090 | 5d |
|  | MH-2.8 / MH-2.9 | **MH-2.8 / MH-2.9** |  | 2026-11-15 | 2026-11-18 |  |  |
| A43150 |  | Excavation | 1d | 2026-11-15 | 2026-11-15 | A43100, A1190 | 5d |
| A43160 |  | Pipe Laying | 1d | 2026-11-16 | 2026-11-16 | A43150 | 5d |
| A43170 |  | Install Manhole | 1d | 2026-11-16 | 2026-11-16 | A43150 | 6d |
| A43180 |  | Testing & Inspection | 1d | 2026-11-17 | 2026-11-17 | A43160 | 5d |
| A43190 |  | Backfilling & Compaction | 1d | 2026-11-18 | 2026-11-18 | A43180, A43170, A43140 | 5d |

| ID | WBS | Task | Duration | Start | Finish | Predecessors | Total float |
| --- | --- | --- | --- | --- | --- | --- | --- |
|  | MH-2.8.1 / MH-2.8.1A | **MH-2.8.1 / MH-2.8.1A** |  | 2026-11-16 | 2026-11-19 |  |  |
| A43200 |  | Excavation | 1d | 2026-11-16 | 2026-11-16 | A43150, A1190 | 5d |
| A43210 |  | Pipe Laying | 1d | 2026-11-17 | 2026-11-17 | A43200 | 5d |
| A43220 |  | Install Manhole | 1d | 2026-11-17 | 2026-11-17 | A43200 | 6d |
| A43230 |  | Testing & Inspection | 1d | 2026-11-18 | 2026-11-18 | A43210 | 5d |
| A43240 |  | Backfilling & Compaction | 1d | 2026-11-19 | 2026-11-19 | A43230, A43220, A43190 | 5d |
|  | MH-2.9 / MH-2.10 | **MH-2.9 / MH-2.10** |  | 2026-11-17 | 2026-11-21 |  |  |
| A43250 |  | Excavation | 1d | 2026-11-17 | 2026-11-17 | A43200, A1190 | 5d |
| A43260 |  | Pipe Laying | 1d | 2026-11-18 | 2026-11-18 | A43250 | 5d |
| A43270 |  | Install Manhole | 1d | 2026-11-18 | 2026-11-18 | A43250 | 6d |
| A43280 |  | Testing & Inspection | 1d | 2026-11-19 | 2026-11-19 | A43260 | 5d |
| A43290 |  | Backfilling & Compaction | 1d | 2026-11-21 | 2026-11-21 | A43280, A43270, A43240 | 5d |
|  | MH-2.9.0 / MH-2.9.1 | **MH-2.9.0 / MH-2.9.1** |  | 2026-11-18 | 2026-11-22 |  |  |
| A43300 |  | Excavation | 1d | 2026-11-18 | 2026-11-18 | A43250, A1190 | 5d |
| A43310 |  | Pipe Laying | 1d | 2026-11-19 | 2026-11-19 | A43300 | 5d |
| A43320 |  | Install Manhole | 1d | 2026-11-19 | 2026-11-19 | A43300 | 6d |
| A43330 |  | Testing & Inspection | 1d | 2026-11-21 | 2026-11-21 | A43310 | 5d |
| A43340 |  | Backfilling & Compaction | 1d | 2026-11-22 | 2026-11-22 | A43330, A43320, A43290 | 5d |
|  | MH-2.7 / MH-2.8 | **MH-2.7 / MH-2.8** |  | 2026-11-19 | 2026-11-23 |  |  |
| A43350 |  | Excavation | 1d | 2026-11-19 | 2026-11-19 | A43300, A1190 | 5d |
| A43360 |  | Pipe Laying | 1d | 2026-11-21 | 2026-11-21 | A43350 | 5d |
| A43370 |  | Install Manhole | 1d | 2026-11-21 | 2026-11-21 | A43350 | 6d |
| A43380 |  | Testing & Inspection | 1d | 2026-11-22 | 2026-11-22 | A43360 | 5d |
| A43390 |  | Backfilling & Compaction | 1d | 2026-11-23 | 2026-11-23 | A43380, A43370, A43340 | 5d |
|  | MH-1.10.10.0 / MH-1.10.10.1 | **MH-1.10.10.0 / MH-1.10.10.1** |  | 2026-11-21 | 2026-11-24 |  |  |
| A43400 |  | Excavation | 1d | 2026-11-21 | 2026-11-21 | A43350, A1190 | 5d |
| A43410 |  | Pipe Laying | 1d | 2026-11-22 | 2026-11-22 | A43400 | 5d |
| A43420 |  | Install Manhole | 1d | 2026-11-22 | 2026-11-22 | A43400 | 6d |
| A43430 |  | Testing & Inspection | 1d | 2026-11-23 | 2026-11-23 | A43410 | 5d |
| A43440 |  | Backfilling & Compaction | 1d | 2026-11-24 | 2026-11-24 | A43430, A43420, A43390 | 5d |
|  | LR 04 | **LR 04** |  | 2026-08-12 | 2026-10-15 |  |  |
|  | MH-2.21.0 / MH-2.21.1 | **MH-2.21.0 / MH-2.21.1** |  | 2026-08-12 | 2026-08-30 |  |  |
| A43650 |  | Excavation | 2d | 2026-08-12 | 2026-08-13 | A71770, A1190, A58760 | 22d |
| A43660 |  | Pipe Laying | 8d | 2026-08-15 | 2026-08-23 | A43650 | 22d |
| A43670 |  | Install Manhole | 4d | 2026-08-15 | 2026-08-18 | A43650 | 28d |
| A43680 |  | Testing & Inspection | 2d | 2026-08-24 | 2026-08-25 | A43660 | 22d |
| A43690 |  | Backfilling & Compaction | 4d | 2026-08-26 | 2026-08-30 | A43680, A43670 | 22d |
|  | MH-2.21.1 / MH-2.21.2 | **MH-2.21.1 / MH-2.21.2** |  | 2026-08-15 | 2026-09-03 |  |  |
| A43450 |  | Excavation | 4d | 2026-08-15 | 2026-08-18 | A43650, A1190 | 22d |
| A43460 |  | Pipe Laying | 8d | 2026-08-19 | 2026-08-27 | A43450 | 22d |
| A43470 |  | Install Manhole | 4d | 2026-08-19 | 2026-08-23 | A43450 | 28d |
| A43480 |  | Testing & Inspection | 2d | 2026-08-29 | 2026-08-30 | A43460 | 22d |
| A43490 |  | Backfilling & Compaction | 4d | 2026-08-31 | 2026-09-03 | A43480, A43470, A43690 | 22d |
|  | MH-2.21.1.0 / MH-2.21.1.1 | **MH-2.21.1.0 / MH-2.21.1.1** |  | 2026-08-19 | 2026-09-08 |  |  |
| A43500 |  | Excavation | 4d | 2026-08-19 | 2026-08-23 | A43450, A1190 | 22d |
| A43510 |  | Pipe Laying | 8d | 2026-08-24 | 2026-09-01 | A43500 | 22d |
| A43520 |  | Install Manhole | 4d | 2026-08-24 | 2026-08-27 | A43500 | 28d |
| A43530 |  | Testing & Inspection | 2d | 2026-09-02 | 2026-09-03 | A43510 | 22d |
| A43540 |  | Backfilling & Compaction | 4d | 2026-09-05 | 2026-09-08 | A43530, A43520, A43490 | 22d |
|  | MH-2.21.2 / MH-2.21.3 | **MH-2.21.2 / MH-2.21.3** |  | 2026-08-24 | 2026-09-13 |  |  |
| A43550 |  | Excavation | 4d | 2026-08-24 | 2026-08-27 | A43500, A1190 | 22d |
| A43560 |  | Pipe Laying | 8d | 2026-08-29 | 2026-09-06 | A43550 | 22d |
| A43570 |  | Install Manhole | 4d | 2026-08-29 | 2026-09-01 | A43550 | 28d |
| A43580 |  | Testing & Inspection | 2d | 2026-09-07 | 2026-09-08 | A43560 | 22d |
| A43590 |  | Backfilling & Compaction | 4d | 2026-09-09 | 2026-09-13 | A43580, A43570, A43540 | 22d |
|  | MH-2.21.2.0 / MH-2.21.2.1 | **MH-2.21.2.0 / MH-2.21.2.1** |  | 2026-08-29 | 2026-09-17 |  |  |
| A43700 |  | Excavation | 4d | 2026-08-29 | 2026-09-01 | A43550, A1190 | 22d |
| A43710 |  | Pipe Laying | 8d | 2026-09-02 | 2026-09-10 | A43700 | 22d |
| A43720 |  | Install Manhole | 4d | 2026-09-02 | 2026-09-06 | A43700 | 28d |
| A43730 |  | Testing & Inspection | 2d | 2026-09-12 | 2026-09-13 | A43710 | 22d |
| A43740 |  | Backfilling & Compaction | 4d | 2026-09-14 | 2026-09-17 | A43730, A43720, A43590 | 22d |
|  | MH-2.21.3 / MH-2.21.4 | **MH-2.21.3 / MH-2.21.4** |  | 2026-09-02 | 2026-09-22 |  |  |
| A43750 |  | Excavation | 4d | 2026-09-02 | 2026-09-06 | A43700, A1190 | 22d |
| A43760 |  | Pipe Laying | 8d | 2026-09-07 | 2026-09-15 | A43750 | 22d |
| A43770 |  | Install Manhole | 4d | 2026-09-07 | 2026-09-10 | A43750 | 28d |
| A43780 |  | Testing & Inspection | 2d | 2026-09-16 | 2026-09-17 | A43760 | 22d |
| A43790 |  | Backfilling & Compaction | 4d | 2026-09-19 | 2026-09-22 | A43780, A43770, A43740 | 22d |
|  | MH-2.21.3.0 / MH-2.21.3.1 | **MH-2.21.3.0 / MH-2.21.3.1** |  | 2026-09-07 | 2026-09-27 |  |  |
| A43800 |  | Excavation | 4d | 2026-09-07 | 2026-09-10 | A43750, A1190 | 22d |
| A43810 |  | Pipe Laying | 8d | 2026-09-12 | 2026-09-20 | A43800 | 22d |

| ID | WBS | Task | Duration | Start | Finish | Predecessors | Total float |
| --- | --- | --- | --- | --- | --- | --- | --- |
| A43820 |  | Install Manhole | 4d | 2026-09-12 | 2026-09-15 | A43800 | 28d |
| A43830 |  | Testing & Inspection | 2d | 2026-09-21 | 2026-09-22 | A43810 | 22d |
| A43840 |  | Backfilling & Compaction | 4d | 2026-09-23 | 2026-09-27 | A43830, A43820, A43790 | 22d |
|  | MH-2.21.4 / MH-2.21.5 | **MH-2.21.4 / MH-2.21.5** |  | 2026-09-12 | 2026-10-01 |  |  |
| A43850 |  | Excavation | 4d | 2026-09-12 | 2026-09-15 | A43800, A1190 | 22d |
| A43860 |  | Pipe Laying | 8d | 2026-09-16 | 2026-09-24 | A43850 | 22d |
| A43870 |  | Install Manhole | 4d | 2026-09-16 | 2026-09-20 | A43850 | 28d |
| A43880 |  | Testing & Inspection | 2d | 2026-09-26 | 2026-09-27 | A43860 | 22d |
| A43890 |  | Backfilling & Compaction | 4d | 2026-09-28 | 2026-10-01 | A43880, A43870, A43840 | 22d |
|  | MH-2.21.5 / MH-2.21.6 | **MH-2.21.5 / MH-2.21.6** |  | 2026-09-16 | 2026-10-06 |  |  |
| A43900 |  | Excavation | 4d | 2026-09-16 | 2026-09-20 | A43850, A1190 | 22d |
| A43910 |  | Pipe Laying | 8d | 2026-09-21 | 2026-09-29 | A43900 | 22d |
| A43920 |  | Install Manhole | 4d | 2026-09-21 | 2026-09-24 | A43900 | 28d |
| A43930 |  | Testing & Inspection | 2d | 2026-09-30 | 2026-10-01 | A43910 | 22d |
| A43940 |  | Backfilling & Compaction | 4d | 2026-10-03 | 2026-10-06 | A43930, A43920, A43890 | 22d |
|  | MH-2.21.6 / MH-2.21.7 | **MH-2.21.6 / MH-2.21.7** |  | 2026-09-21 | 2026-10-11 |  |  |
| A43950 |  | Excavation | 4d | 2026-09-21 | 2026-09-24 | A43900, A1190 | 22d |
| A43960 |  | Pipe Laying | 8d | 2026-09-26 | 2026-10-04 | A43950 | 22d |
| A43970 |  | Install Manhole | 4d | 2026-09-26 | 2026-09-29 | A43950 | 28d |
| A43980 |  | Testing & Inspection | 2d | 2026-10-05 | 2026-10-06 | A43960 | 22d |
| A43990 |  | Backfilling & Compaction | 4d | 2026-10-07 | 2026-10-11 | A43980, A43970, A43940 | 22d |
|  | MH-2.21.7 / MH-2.21.8 | **MH-2.21.7 / MH-2.21.8** |  | 2026-09-26 | 2026-10-15 |  |  |
| A44000 |  | Excavation | 4d | 2026-09-26 | 2026-09-29 | A43950, A1190 | 26d |
| A44010 |  | Pipe Laying | 4d | 2026-09-30 | 2026-10-04 | A44000 | 26d |
| A44020 |  | Install Manhole | 4d | 2026-09-30 | 2026-10-04 | A44000 | 28d |
| A44030 |  | Testing & Inspection | 2d | 2026-10-05 | 2026-10-06 | A44010 | 26d |
| A44040 |  | Backfilling & Compaction | 4d | 2026-10-12 | 2026-10-15 | A44030, A44020, A43990 | 22d |
|  | LR 05 | **LR 05** |  | 2026-05-10 | 2026-07-29 |  |  |
|  | MH-2.10 / MH-2.11 | **MH-2.10 / MH-2.11** |  | 2026-05-10 | 2026-05-30 |  |  |
| A44050 |  | Excavation | 4d | 2026-05-10 | 2026-05-13 | A71420, A1190 | 89d |
| A44060 |  | Pipe Laying | 8d | 2026-05-14 | 2026-05-23 | A44050 | 89d |
| A44070 |  | Install Manhole | 4d | 2026-05-14 | 2026-05-18 | A44050 | 95d |
| A44080 |  | Testing & Inspection | 2d | 2026-05-24 | 2026-05-25 | A44060 | 89d |
| A44090 |  | Backfilling & Compaction | 4d | 2026-05-26 | 2026-05-30 | A44080, A44070 | 89d |
|  | MH-2.10.0 / MH-2.10.1 | **MH-2.10.0 / MH-2.10.1** |  | 2026-05-14 | 2026-06-03 |  |  |
| A44100 |  | Excavation | 4d | 2026-05-14 | 2026-05-18 | A44050, A1190 | 89d |
| A44110 |  | Pipe Laying | 8d | 2026-05-19 | 2026-05-27 | A44100 | 89d |
| A44120 |  | Install Manhole | 4d | 2026-05-19 | 2026-05-23 | A44100 | 95d |
| A44130 |  | Testing & Inspection | 2d | 2026-05-28 | 2026-05-30 | A44110 | 89d |
| A44140 |  | Backfilling & Compaction | 4d | 2026-05-31 | 2026-06-03 | A44130, A44120, A44090 | 89d |
|  | MH-2.11 / MH-2.12 | **MH-2.11 / MH-2.12** |  | 2026-05-19 | 2026-06-08 |  |  |
| A44150 |  | Excavation | 4d | 2026-05-19 | 2026-05-23 | A44100, A1190 | 89d |
| A44160 |  | Pipe Laying | 8d | 2026-05-24 | 2026-06-01 | A44150 | 89d |
| A44170 |  | Install Manhole | 4d | 2026-05-24 | 2026-05-27 | A44150 | 95d |
| A44180 |  | Testing & Inspection | 2d | 2026-06-02 | 2026-06-03 | A44160 | 89d |
| A44190 |  | Backfilling & Compaction | 4d | 2026-06-04 | 2026-06-08 | A44180, A44170, A44140 | 89d |
|  | MH-2.11.0 / MH-2.11.1 | **MH-2.11.0 / MH-2.11.1** |  | 2026-05-24 | 2026-06-13 |  |  |
| A44200 |  | Excavation | 4d | 2026-05-24 | 2026-05-27 | A44150, A1190 | 89d |
| A44210 |  | Pipe Laying | 8d | 2026-05-28 | 2026-06-06 | A44200 | 89d |
| A44220 |  | Install Manhole | 4d | 2026-05-28 | 2026-06-01 | A44200 | 95d |
| A44230 |  | Testing & Inspection | 2d | 2026-06-07 | 2026-06-08 | A44210 | 89d |
| A44240 |  | Backfilling & Compaction | 4d | 2026-06-09 | 2026-06-13 | A44230, A44220, A44190 | 89d |
|  | MH-2.12 / MH-2.13 | **MH-2.12 / MH-2.13** |  | 2026-05-28 | 2026-06-17 |  |  |
| A44250 |  | Excavation | 4d | 2026-05-28 | 2026-06-01 | A44200, A1190 | 89d |
| A44260 |  | Pipe Laying | 8d | 2026-06-02 | 2026-06-10 | A44250 | 89d |
| A44270 |  | Install Manhole | 4d | 2026-06-02 | 2026-06-06 | A44250 | 95d |
| A44280 |  | Testing & Inspection | 2d | 2026-06-11 | 2026-06-13 | A44260 | 89d |
| A44290 |  | Backfilling & Compaction | 4d | 2026-06-14 | 2026-06-17 | A44280, A44270, A44240 | 89d |
|  | MH-2.12.0 / MH-2.12.1 | **MH-2.12.0 / MH-2.12.1** |  | 2026-06-02 | 2026-06-22 |  |  |
| A44300 |  | Excavation | 4d | 2026-06-02 | 2026-06-06 | A44250, A1190 | 89d |
| A44310 |  | Pipe Laying | 8d | 2026-06-07 | 2026-06-15 | A44300 | 89d |
| A44320 |  | Install Manhole | 4d | 2026-06-07 | 2026-06-10 | A44300 | 95d |
| A44330 |  | Testing & Inspection | 2d | 2026-06-16 | 2026-06-17 | A44310 | 89d |
| A44340 |  | Backfilling & Compaction | 4d | 2026-06-18 | 2026-06-22 | A44330, A44320, A44290 | 89d |
|  | MH-2.13 / MH-2.14 | **MH-2.13 / MH-2.14** |  | 2026-06-07 | 2026-06-27 |  |  |
| A44350 |  | Excavation | 4d | 2026-06-07 | 2026-06-10 | A44300, A1190 | 89d |
| A44360 |  | Pipe Laying | 8d | 2026-06-11 | 2026-06-20 | A44350 | 89d |
| A44370 |  | Install Manhole | 4d | 2026-06-11 | 2026-06-15 | A44350 | 95d |
| A44380 |  | Testing & Inspection | 2d | 2026-06-21 | 2026-06-22 | A44360 | 89d |
| A44390 |  | Backfilling & Compaction | 4d | 2026-06-23 | 2026-06-27 | A44380, A44370, A44340 | 89d |

| ID | WBS | Task | Duration | Start | Finish | Predecessors | Total float |
| --- | --- | --- | --- | --- | --- | --- | --- |
|  | MH-2.13.0 / MH-2.13.1 | **MH-2.13.0 / MH-2.13.1** |  | 2026-06-11 | 2026-07-01 |  |  |
| A44400 |  | Excavation | 4d | 2026-06-11 | 2026-06-15 | A44350, A1190 | 89d |
| A44410 |  | Pipe Laying | 8d | 2026-06-16 | 2026-06-24 | A44400 | 89d |
| A44420 |  | Install Manhole | 4d | 2026-06-16 | 2026-06-20 | A44400 | 95d |
| A44430 |  | Testing & Inspection | 2d | 2026-06-25 | 2026-06-27 | A44410 | 89d |
| A44440 |  | Backfilling & Compaction | 4d | 2026-06-28 | 2026-07-01 | A44430, A44420, A44390 | 89d |
|  | MH-2.14 / MH-2.15 | **MH-2.14 / MH-2.15** |  | 2026-06-16 | 2026-07-06 |  |  |
| A44450 |  | Excavation | 4d | 2026-06-16 | 2026-06-20 | A44400, A1190 | 89d |
| A44460 |  | Pipe Laying | 8d | 2026-06-21 | 2026-06-29 | A44450 | 89d |
| A44470 |  | Install Manhole | 4d | 2026-06-21 | 2026-06-24 | A44450 | 95d |
| A44480 |  | Testing & Inspection | 2d | 2026-06-30 | 2026-07-01 | A44460 | 89d |
| A44490 |  | Backfilling & Compaction | 4d | 2026-07-02 | 2026-07-06 | A44480, A44470, A44440 | 89d |
|  | MH-2.14.0 / MH-2.14.1 | **MH-2.14.0 / MH-2.14.1** |  | 2026-06-21 | 2026-07-11 |  |  |
| A44500 |  | Excavation | 4d | 2026-06-21 | 2026-06-24 | A44450, A1190 | 89d |
| A44510 |  | Pipe Laying | 4d | 2026-06-25 | 2026-06-29 | A44500 | 93d |
| A44520 |  | Install Manhole | 4d | 2026-06-25 | 2026-06-29 | A44500 | 95d |
| A44530 |  | Testing & Inspection | 2d | 2026-06-30 | 2026-07-01 | A44510 | 93d |
| A44540 |  | Backfilling & Compaction | 4d | 2026-07-07 | 2026-07-11 | A44530, A44520, A44490 | 89d |
|  | MH-2.15 / MH-2.16 | **MH-2.15 / MH-2.16** |  | 2026-06-25 | 2026-07-15 |  |  |
| A44550 |  | Excavation | 4d | 2026-06-25 | 2026-06-29 | A44500, A1190 | 89d |
| A44560 |  | Pipe Laying | 8d | 2026-06-30 | 2026-07-08 | A44550 | 89d |
| A44570 |  | Install Manhole | 4d | 2026-06-30 | 2026-07-04 | A44550 | 95d |
| A44580 |  | Testing & Inspection | 2d | 2026-07-09 | 2026-07-11 | A44560 | 89d |
| A44590 |  | Backfilling & Compaction | 4d | 2026-07-12 | 2026-07-15 | A44580, A44570, A44540 | 89d |
|  | MH-2.15.0 / MH-2.15.1 | **MH-2.15.0 / MH-2.15.1** |  | 2026-06-30 | 2026-07-20 |  |  |
| A44600 |  | Excavation | 4d | 2026-06-30 | 2026-07-04 | A44550, A1190 | 89d |
| A44610 |  | Pipe Laying | 8d | 2026-07-05 | 2026-07-13 | A44600 | 89d |
| A44620 |  | Install Manhole | 4d | 2026-07-05 | 2026-07-08 | A44600 | 95d |
| A44630 |  | Testing & Inspection | 2d | 2026-07-14 | 2026-07-15 | A44610 | 89d |
| A44640 |  | Backfilling & Compaction | 4d | 2026-07-16 | 2026-07-20 | A44630, A44620, A44590 | 89d |
|  | MH-2.16 / MH-2.17 | **MH-2.16 / MH-2.17** |  | 2026-07-05 | 2026-07-25 |  |  |
| A44650 |  | Excavation | 4d | 2026-07-05 | 2026-07-08 | A44600, A1190 | 89d |
| A44660 |  | Pipe Laying | 8d | 2026-07-09 | 2026-07-18 | A44650 | 89d |
| A44670 |  | Install Manhole | 4d | 2026-07-09 | 2026-07-13 | A44650 | 95d |
| A44680 |  | Testing & Inspection | 2d | 2026-07-19 | 2026-07-20 | A44660 | 89d |
| A44690 |  | Backfilling & Compaction | 4d | 2026-07-21 | 2026-07-25 | A44680, A44670, A44640 | 89d |
|  | MH-2.16.0 / MH-2.16.1 | **MH-2.16.0 / MH-2.16.1** |  | 2026-07-09 | 2026-07-29 |  |  |
| A44700 |  | Excavation | 4d | 2026-07-09 | 2026-07-13 | A44650, A1190 | 89d |
| A44710 |  | Pipe Laying | 8d | 2026-07-14 | 2026-07-22 | A44700 | 89d |
| A44720 |  | Install Manhole | 4d | 2026-07-14 | 2026-07-18 | A44700 | 95d |
| A44730 |  | Testing & Inspection | 2d | 2026-07-23 | 2026-07-25 | A44710 | 89d |
| A44740 |  | Backfilling & Compaction | 4d | 2026-07-26 | 2026-07-29 | A44730, A44720, A44690 | 89d |
|  | LR 06 | **LR 06** |  | 2026-06-02 | 2026-08-17 |  |  |
|  | MH-2.8.0 / MH-2.8.1 | **MH-2.8.0 / MH-2.8.1** |  | 2026-06-02 | 2026-06-22 |  |  |
| A44750 |  | Excavation | 4d | 2026-06-02 | 2026-06-06 | A71170, A1190 | 2d |
| A44760 |  | Pipe Laying | 8d | 2026-06-07 | 2026-06-15 | A44750 | 2d |
| A44770 |  | Install Manhole | 4d | 2026-06-07 | 2026-06-10 | A44750 | 8d |
| A44780 |  | Testing & Inspection | 2d | 2026-06-16 | 2026-06-17 | A44760 | 2d |
| A44790 |  | Backfilling & Compaction | 4d | 2026-06-18 | 2026-06-22 | A44780, A44770 | 2d |
|  | MH-2.8.1 / MH-2.8.2 | **MH-2.8.1 / MH-2.8.2** |  | 2026-06-07 | 2026-06-27 |  |  |
| A44800 |  | Excavation | 4d | 2026-06-07 | 2026-06-10 | A44750, A1190 | 2d |
| A44810 |  | Pipe Laying | 8d | 2026-06-11 | 2026-06-20 | A44800 | 2d |
| A44820 |  | Install Manhole | 4d | 2026-06-11 | 2026-06-15 | A44800 | 8d |
| A44830 |  | Testing & Inspection | 2d | 2026-06-21 | 2026-06-22 | A44810 | 2d |
| A44840 |  | Backfilling & Compaction | 4d | 2026-06-23 | 2026-06-27 | A44830, A44820, A44790 | 2d |
|  | MH-2.8.1.0 / MH-2.8.1.1 | **MH-2.8.1.0 / MH-2.8.1.1** |  | 2026-06-11 | 2026-07-01 |  |  |
| A44850 |  | Excavation | 4d | 2026-06-11 | 2026-06-15 | A44800, A1190 | 2d |
| A44860 |  | Pipe Laying | 8d | 2026-06-16 | 2026-06-24 | A44850 | 2d |
| A44870 |  | Install Manhole | 4d | 2026-06-16 | 2026-06-20 | A44850 | 8d |
| A44880 |  | Testing & Inspection | 2d | 2026-06-25 | 2026-06-27 | A44860 | 2d |
| A44890 |  | Backfilling & Compaction | 4d | 2026-06-28 | 2026-07-01 | A44880, A44870, A44840 | 2d |
|  | MH-2.8.2 / MH-2.8.3 | **MH-2.8.2 / MH-2.8.3** |  | 2026-06-16 | 2026-07-06 |  |  |
| A44900 |  | Excavation | 4d | 2026-06-16 | 2026-06-20 | A44850, A1190 | 2d |
| A44910 |  | Pipe Laying | 8d | 2026-06-21 | 2026-06-29 | A44900 | 2d |
| A44920 |  | Install Manhole | 4d | 2026-06-21 | 2026-06-24 | A44900 | 8d |
| A44930 |  | Testing & Inspection | 2d | 2026-06-30 | 2026-07-01 | A44910 | 2d |
| A44940 |  | Backfilling & Compaction | 4d | 2026-07-02 | 2026-07-06 | A44930, A44920, A44890 | 2d |
|  | MH-2.8.2.0 / MH-2.8.2.1 | **MH-2.8.2.0 / MH-2.8.2.1** |  | 2026-06-21 | 2026-07-11 |  |  |
| A44950 |  | Excavation | 4d | 2026-06-21 | 2026-06-24 | A44900, A1190 | 2d |
| A44960 |  | Pipe Laying | 8d | 2026-06-25 | 2026-07-04 | A44950 | 2d |

| ID | WBS | Task | Duration | Start | Finish | Predecessors | Total float |
| --- | --- | --- | --- | --- | --- | --- | --- |
| A44970 |  | Install Manhole | 4d | 2026-06-25 | 2026-06-29 | A44950 | 8d |
| A44980 |  | Testing & Inspection | 2d | 2026-07-05 | 2026-07-06 | A44960 | 2d |
| A44990 |  | Backfilling & Compaction | 4d | 2026-07-07 | 2026-07-11 | A44980, A44970, A44940 | 2d |
|  | MH-2.8.3 / MH-2.8.4 | **MH-2.8.3 / MH-2.8.4** |  | 2026-06-25 | 2026-07-15 |  |  |
| A45000 |  | Excavation | 4d | 2026-06-25 | 2026-06-29 | A44950, A1190 | 2d |
| A45010 |  | Pipe Laying | 8d | 2026-06-30 | 2026-07-08 | A45000 | 2d |
| A45020 |  | Install Manhole | 4d | 2026-06-30 | 2026-07-04 | A45000 | 8d |
| A45030 |  | Testing & Inspection | 2d | 2026-07-09 | 2026-07-11 | A45010 | 2d |
| A45040 |  | Backfilling & Compaction | 4d | 2026-07-12 | 2026-07-15 | A45030, A45020, A44990 | 2d |
|  | MH-2.8.3.0 / MH-2.8.3.1 | **MH-2.8.3.0 / MH-2.8.3.1** |  | 2026-06-30 | 2026-07-20 |  |  |
| A45050 |  | Excavation | 4d | 2026-06-30 | 2026-07-04 | A45000, A1190 | 2d |
| A45060 |  | Pipe Laying | 8d | 2026-07-05 | 2026-07-13 | A45050 | 2d |
| A45070 |  | Install Manhole | 4d | 2026-07-05 | 2026-07-08 | A45050 | 8d |
| A45080 |  | Testing & Inspection | 2d | 2026-07-14 | 2026-07-15 | A45060 | 2d |
| A45090 |  | Backfilling & Compaction | 4d | 2026-07-16 | 2026-07-20 | A45080, A45070, A45040 | 2d |
|  | MH-2.8.4 / MH-2.8.5 | **MH-2.8.4 / MH-2.8.5** |  | 2026-07-05 | 2026-07-25 |  |  |
| A45100 |  | Excavation | 4d | 2026-07-05 | 2026-07-08 | A45050, A1190 | 2d |
| A45110 |  | Pipe Laying | 8d | 2026-07-09 | 2026-07-18 | A45100 | 2d |
| A45120 |  | Install Manhole | 4d | 2026-07-09 | 2026-07-13 | A45100 | 8d |
| A45130 |  | Testing & Inspection | 2d | 2026-07-19 | 2026-07-20 | A45110 | 2d |
| A45140 |  | Backfilling & Compaction | 4d | 2026-07-21 | 2026-07-25 | A45130, A45120, A45090 | 2d |
|  | MH-2.8.4.0 / MH-2.8.4.1 | **MH-2.8.4.0 / MH-2.8.4.1** |  | 2026-07-09 | 2026-07-29 |  |  |
| A45150 |  | Excavation | 4d | 2026-07-09 | 2026-07-13 | A45100, A1190 | 2d |
| A45160 |  | Pipe Laying | 4d | 2026-07-14 | 2026-07-18 | A45150 | 6d |
| A45170 |  | Install Manhole | 4d | 2026-07-14 | 2026-07-18 | A45150 | 8d |
| A45180 |  | Testing & Inspection | 2d | 2026-07-19 | 2026-07-20 | A45160 | 6d |
| A45190 |  | Backfilling & Compaction | 4d | 2026-07-26 | 2026-07-29 | A45180, A45170, A45140 | 2d |
|  | MH-2.8.5 / MH-2.8.6 | **MH-2.8.5 / MH-2.8.6** |  | 2026-07-14 | 2026-08-03 |  |  |
| A45200 |  | Excavation | 4d | 2026-07-14 | 2026-07-18 | A45150, A1190 | 2d |
| A45210 |  | Pipe Laying | 8d | 2026-07-19 | 2026-07-27 | A45200 | 2d |
| A45220 |  | Install Manhole | 4d | 2026-07-19 | 2026-07-22 | A45200 | 8d |
| A45230 |  | Testing & Inspection | 2d | 2026-07-28 | 2026-07-29 | A45210 | 2d |
| A45240 |  | Backfilling & Compaction | 4d | 2026-07-30 | 2026-08-03 | A45230, A45220, A45190 | 2d |
|  | MH-2.8.5.0 / MH-2.8.5.1 | **MH-2.8.5.0 / MH-2.8.5.1** |  | 2026-07-19 | 2026-08-08 |  |  |
| A45250 |  | Excavation | 4d | 2026-07-19 | 2026-07-22 | A45200, A1190 | 2d |
| A45260 |  | Pipe Laying | 8d | 2026-07-23 | 2026-08-01 | A45250 | 2d |
| A45270 |  | Install Manhole | 4d | 2026-07-23 | 2026-07-27 | A45250 | 8d |
| A45280 |  | Testing & Inspection | 2d | 2026-08-02 | 2026-08-03 | A45260 | 2d |
| A45290 |  | Backfilling & Compaction | 4d | 2026-08-04 | 2026-08-08 | A45280, A45270, A45240 | 2d |
|  | MH-2.8.6 / MH-2.8.7 | **MH-2.8.6 / MH-2.8.7** |  | 2026-07-23 | 2026-08-12 |  |  |
| A45300 |  | Excavation | 4d | 2026-07-23 | 2026-07-27 | A45250, A1190 | 2d |
| A45310 |  | Pipe Laying | 8d | 2026-07-28 | 2026-08-05 | A45300 | 2d |
| A45320 |  | Install Manhole | 4d | 2026-07-28 | 2026-08-01 | A45300 | 8d |
| A45330 |  | Testing & Inspection | 2d | 2026-08-06 | 2026-08-08 | A45310 | 2d |
| A45340 |  | Backfilling & Compaction | 4d | 2026-08-09 | 2026-08-12 | A45330, A45320, A45290 | 2d |
|  | MH-2.8.6.0 / MH-2.8.6.1 | **MH-2.8.6.0 / MH-2.8.6.1** |  | 2026-07-28 | 2026-08-17 |  |  |
| A45350 |  | Excavation | 4d | 2026-07-28 | 2026-08-01 | A45300, A1190 | 2d |
| A45360 |  | Pipe Laying | 8d | 2026-08-02 | 2026-08-10 | A45350 | 2d |
| A45370 |  | Install Manhole | 4d | 2026-08-02 | 2026-08-05 | A45350 | 8d |
| A45380 |  | Testing & Inspection | 2d | 2026-08-11 | 2026-08-12 | A45360 | 2d |
| A45390 |  | Backfilling & Compaction | 4d | 2026-08-13 | 2026-08-17 | A45380, A45370, A45340 | 2d |
|  | LR 07 | **LR 07** |  | 2026-06-08 | 2026-08-18 |  |  |
|  | MH-1.12.3.3.0 / MH-1.12.3.3.0 | **MH-1.12.3.3.0 / MH-1.12.3.3.0** |  | 2026-06-08 | 2026-06-28 |  |  |
| A45400 |  | Excavation | 4d | 2026-06-08 | 2026-06-11 | A70820, A1190 | 69d |
| A45410 |  | Pipe Laying | 8d | 2026-06-13 | 2026-06-21 | A45400 | 69d |
| A45420 |  | Install Manhole | 4d | 2026-06-13 | 2026-06-16 | A45400 | 75d |
| A45430 |  | Testing & Inspection | 2d | 2026-06-22 | 2026-06-23 | A45410 | 69d |
| A45440 |  | Backfilling & Compaction | 4d | 2026-06-24 | 2026-06-28 | A45430, A45420 | 69d |
|  | MH-1.12.3.2 / MH-1.12.3.3 | **MH-1.12.3.2 / MH-1.12.3.3** |  | 2026-06-13 | 2026-07-02 |  |  |
| A45450 |  | Excavation | 4d | 2026-06-13 | 2026-06-16 | A45400, A1190 | 69d |
| A45460 |  | Pipe Laying | 8d | 2026-06-17 | 2026-06-25 | A45450 | 69d |
| A45470 |  | Install Manhole | 4d | 2026-06-17 | 2026-06-21 | A45450 | 75d |
| A45480 |  | Testing & Inspection | 2d | 2026-06-27 | 2026-06-28 | A45460 | 69d |
| A45490 |  | Backfilling & Compaction | 4d | 2026-06-29 | 2026-07-02 | A45480, A45470, A45440 | 69d |
|  | MH-1.12.3.3 / MH-1.12.3.4 | **MH-1.12.3.3 / MH-1.12.3.4** |  | 2026-06-17 | 2026-07-07 |  |  |
| A45500 |  | Excavation | 4d | 2026-06-17 | 2026-06-21 | A45450, A1190 | 69d |
| A45510 |  | Pipe Laying | 8d | 2026-06-22 | 2026-06-30 | A45500 | 69d |
| A45520 |  | Install Manhole | 4d | 2026-06-22 | 2026-06-25 | A45500 | 75d |
| A45530 |  | Testing & Inspection | 2d | 2026-07-01 | 2026-07-02 | A45510 | 69d |
| A45540 |  | Backfilling & Compaction | 4d | 2026-07-04 | 2026-07-07 | A45530, A45520, A45490 | 69d |

| ID | WBS | Task | Duration | Start | Finish | Predecessors | Total float |
| --- | --- | --- | --- | --- | --- | --- | --- |
|  | MH-1.12.3.4 / MH-1.12.3.5 | **MH-1.12.3.4 / MH-1.12.3.5** |  | 2026-07-25 | 2026-08-13 |  |  |
| A45900 |  | Excavation | 4d | 2026-07-25 | 2026-07-28 | A45850, A1190 | 69d |
| A45910 |  | Pipe Laying | 8d | 2026-07-29 | 2026-08-06 | A45900 | 69d |
| A45920 |  | Install Manhole | 4d | 2026-07-29 | 2026-08-02 | A45900 | 75d |
| A45930 |  | Testing & Inspection | 2d | 2026-08-08 | 2026-08-09 | A45910 | 69d |
| A45940 |  | Backfilling & Compaction | 4d | 2026-08-10 | 2026-08-13 | A45930, A45920, A45890 | 69d |
|  | MH-2.6.1 / MH-2.6.2 | **MH-2.6.1 / MH-2.6.2** |  | 2026-06-22 | 2026-07-12 |  |  |
| A45550 |  | Excavation | 4d | 2026-06-22 | 2026-06-25 | A45500, A1190 | 69d |
| A45560 |  | Pipe Laying | 8d | 2026-06-27 | 2026-07-05 | A45550 | 69d |
| A45570 |  | Install Manhole | 4d | 2026-06-27 | 2026-06-30 | A45550 | 75d |
| A45580 |  | Testing & Inspection | 2d | 2026-07-06 | 2026-07-07 | A45560 | 69d |
| A45590 |  | Backfilling & Compaction | 4d | 2026-07-08 | 2026-07-12 | A45580, A45570, A45540 | 69d |
|  | MH-2.6.1.0 / MH-2.6.1.1 | **MH-2.6.1.0 / MH-2.6.1.1** |  | 2026-06-27 | 2026-07-16 |  |  |
| A45600 |  | Excavation | 4d | 2026-06-27 | 2026-06-30 | A45550, A1190 | 69d |
| A45610 |  | Pipe Laying | 8d | 2026-07-01 | 2026-07-09 | A45600 | 69d |
| A45620 |  | Install Manhole | 4d | 2026-07-01 | 2026-07-05 | A45600 | 75d |
| A45630 |  | Testing & Inspection | 2d | 2026-07-11 | 2026-07-12 | A45610 | 69d |
| A45640 |  | Backfilling & Compaction | 4d | 2026-07-13 | 2026-07-16 | A45630, A45620, A45590 | 69d |
|  | MH-2.6.2 / MH-2.6.3 | **MH-2.6.2 / MH-2.6.3** |  | 2026-07-01 | 2026-07-21 |  |  |
| A45650 |  | Excavation | 4d | 2026-07-01 | 2026-07-05 | A45600, A1190 | 69d |
| A45660 |  | Pipe Laying | 8d | 2026-07-06 | 2026-07-14 | A45650 | 69d |
| A45670 |  | Install Manhole | 4d | 2026-07-06 | 2026-07-09 | A45650 | 75d |
| A45680 |  | Testing & Inspection | 2d | 2026-07-15 | 2026-07-16 | A45660 | 69d |
| A45690 |  | Backfilling & Compaction | 4d | 2026-07-18 | 2026-07-21 | A45680, A45670, A45640 | 69d |
|  | MH-2.6.2.0 / MH-2.6.2.1 | **MH-2.6.2.0 / MH-2.6.2.1** |  | 2026-07-06 | 2026-07-26 |  |  |
| A45700 |  | Excavation | 4d | 2026-07-06 | 2026-07-09 | A45650, A1190 | 69d |
| A45710 |  | Pipe Laying | 8d | 2026-07-11 | 2026-07-19 | A45700 | 69d |
| A45720 |  | Install Manhole | 4d | 2026-07-11 | 2026-07-14 | A45700 | 75d |
| A45730 |  | Testing & Inspection | 2d | 2026-07-20 | 2026-07-21 | A45710 | 69d |
| A45740 |  | Backfilling & Compaction | 4d | 2026-07-22 | 2026-07-26 | A45730, A45720, A45690 | 69d |
|  | MH-2.6.3 / MH-2.6.4 | **MH-2.6.3 / MH-2.6.4** |  | 2026-07-11 | 2026-07-30 |  |  |
| A45750 |  | Excavation | 4d | 2026-07-11 | 2026-07-14 | A45700, A1190 | 69d |
| A45760 |  | Pipe Laying | 8d | 2026-07-15 | 2026-07-23 | A45750 | 69d |
| A45770 |  | Install Manhole | 4d | 2026-07-15 | 2026-07-19 | A45750 | 75d |
| A45780 |  | Testing & Inspection | 2d | 2026-07-25 | 2026-07-26 | A45760 | 69d |
| A45790 |  | Backfilling & Compaction | 4d | 2026-07-27 | 2026-07-30 | A45780, A45770, A45740 | 69d |
|  | MH-2.6.3.0 / MH-2.6.3.1 | **MH-2.6.3.0 / MH-2.6.3.1** |  | 2026-07-15 | 2026-08-04 |  |  |
| A45800 |  | Excavation | 4d | 2026-07-15 | 2026-07-19 | A45750, A1190 | 69d |
| A45810 |  | Pipe Laying | 8d | 2026-07-20 | 2026-07-28 | A45800 | 69d |
| A45820 |  | Install Manhole | 4d | 2026-07-20 | 2026-07-23 | A45800 | 75d |
| A45830 |  | Testing & Inspection | 2d | 2026-07-29 | 2026-07-30 | A45810 | 69d |
| A45840 |  | Backfilling & Compaction | 4d | 2026-08-01 | 2026-08-04 | A45830, A45820, A45790 | 69d |
|  | MH-2.6.4 / MH-2.6.5 | **MH-2.6.4 / MH-2.6.5** |  | 2026-07-20 | 2026-08-09 |  |  |
| A45850 |  | Excavation | 4d | 2026-07-20 | 2026-07-23 | A45800, A1190 | 69d |
| A45860 |  | Pipe Laying | 8d | 2026-07-25 | 2026-08-02 | A45850 | 69d |
| A45870 |  | Install Manhole | 4d | 2026-07-25 | 2026-07-28 | A45850 | 75d |
| A45880 |  | Testing & Inspection | 2d | 2026-08-03 | 2026-08-04 | A45860 | 69d |
| A45890 |  | Backfilling & Compaction | 4d | 2026-08-05 | 2026-08-09 | A45880, A45870, A45840 | 69d |
|  | MH-2.6.0 / MH-2.6.1 | **MH-2.6.0 / MH-2.6.1** |  | 2026-07-29 | 2026-08-18 |  |  |
| A45950 |  | Excavation | 4d | 2026-07-29 | 2026-08-02 | A45900, A1190 | 69d |
| A45960 |  | Pipe Laying | 8d | 2026-08-03 | 2026-08-11 | A45950 | 69d |
| A45970 |  | Install Manhole | 4d | 2026-08-03 | 2026-08-06 | A45950 | 75d |
| A45980 |  | Testing & Inspection | 2d | 2026-08-12 | 2026-08-13 | A45960 | 69d |
| A45990 |  | Backfilling & Compaction | 4d | 2026-08-15 | 2026-08-18 | A45980, A45970, A45940 | 69d |
|  | LR 08 | **LR 08** |  | 2026-06-27 | 2026-09-06 |  |  |
|  | MH-1.12.3 / MH-1.12.4 | **MH-1.12.3 / MH-1.12.4** |  | 2026-06-27 | 2026-07-16 |  |  |
| A46000 |  | Excavation | 4d | 2026-06-27 | 2026-06-30 | A70470, A1190 | 40d |
| A46010 |  | Pipe Laying | 8d | 2026-07-01 | 2026-07-09 | A46000 | 40d |
| A46020 |  | Install Manhole | 4d | 2026-07-01 | 2026-07-05 | A46000 | 46d |
| A46030 |  | Testing & Inspection | 2d | 2026-07-11 | 2026-07-12 | A46010 | 40d |
| A46040 |  | Backfilling & Compaction | 4d | 2026-07-13 | 2026-07-16 | A46030, A46020 | 40d |
|  | MH-1.12.4 / MH-1.12.5 | **MH-1.12.4 / MH-1.12.5** |  | 2026-07-01 | 2026-07-21 |  |  |
| A46050 |  | Excavation | 4d | 2026-07-01 | 2026-07-05 | A46000, A1190 | 40d |
| A46060 |  | Pipe Laying | 8d | 2026-07-06 | 2026-07-14 | A46050 | 40d |
| A46070 |  | Install Manhole | 4d | 2026-07-06 | 2026-07-09 | A46050 | 46d |
| A46080 |  | Testing & Inspection | 2d | 2026-07-15 | 2026-07-16 | A46060 | 40d |
| A46090 |  | Backfilling & Compaction | 4d | 2026-07-18 | 2026-07-21 | A46080, A46070, A46040 | 40d |
|  | MH-1.12.4.0 / MH-1.12.4.1 | **MH-1.12.4.0 / MH-1.12.4.1** |  | 2026-07-06 | 2026-07-26 |  |  |
| A46100 |  | Excavation | 4d | 2026-07-06 | 2026-07-09 | A46050, A1190 | 40d |
| A46110 |  | Pipe Laying | 8d | 2026-07-11 | 2026-07-19 | A46100 | 40d |

| ID | WBS | Task | Duration | Start | Finish | Predecessors | Total float |
| --- | --- | --- | --- | --- | --- | --- | --- |
| A46120 |  | Install Manhole | 4d | 2026-07-11 | 2026-07-14 | A46100 | 46d |
| A46130 |  | Testing & Inspection | 2d | 2026-07-20 | 2026-07-21 | A46110 | 40d |
| A46140 |  | Backfilling & Compaction | 4d | 2026-07-22 | 2026-07-26 | A46130, A46120, A46090 | 40d |
|  | MH-1.12.5 / MH-1.12.6 | **MH-1.12.5 / MH-1.12.6** |  | 2026-07-11 | 2026-07-30 |  |  |
| A46150 |  | Excavation | 4d | 2026-07-11 | 2026-07-14 | A46100, A1190 | 40d |
| A46160 |  | Pipe Laying | 8d | 2026-07-15 | 2026-07-23 | A46150 | 40d |
| A46170 |  | Install Manhole | 4d | 2026-07-15 | 2026-07-19 | A46150 | 46d |
| A46180 |  | Testing & Inspection | 2d | 2026-07-25 | 2026-07-26 | A46160 | 40d |
| A46190 |  | Backfilling & Compaction | 4d | 2026-07-27 | 2026-07-30 | A46180, A46170, A46140 | 40d |
|  | MH-1.12.5.0 / MH-1.12.5.1 | **MH-1.12.5.0 / MH-1.12.5.1** |  | 2026-07-15 | 2026-08-04 |  |  |
| A46200 |  | Excavation | 4d | 2026-07-15 | 2026-07-19 | A46150, A1190 | 40d |
| A46210 |  | Pipe Laying | 8d | 2026-07-20 | 2026-07-28 | A46200 | 40d |
| A46220 |  | Install Manhole | 4d | 2026-07-20 | 2026-07-23 | A46200 | 46d |
| A46230 |  | Testing & Inspection | 2d | 2026-07-29 | 2026-07-30 | A46210 | 40d |
| A46240 |  | Backfilling & Compaction | 4d | 2026-08-01 | 2026-08-04 | A46230, A46220, A46190 | 40d |
|  | MH-1.12.6 / MH-1.12.7 | **MH-1.12.6 / MH-1.12.7** |  | 2026-07-20 | 2026-08-09 |  |  |
| A46250 |  | Excavation | 4d | 2026-07-20 | 2026-07-23 | A46200, A1190 | 40d |
| A46260 |  | Pipe Laying | 4d | 2026-07-25 | 2026-07-28 | A46250 | 44d |
| A46270 |  | Install Manhole | 4d | 2026-07-25 | 2026-07-28 | A46250 | 46d |
| A46280 |  | Testing & Inspection | 2d | 2026-07-29 | 2026-07-30 | A46260 | 44d |
| A46290 |  | Backfilling & Compaction | 4d | 2026-08-05 | 2026-08-09 | A46280, A46270, A46240 | 40d |
|  | MH-1.12.6.0 / MH-1.12.6.1 | **MH-1.12.6.0 / MH-1.12.6.1** |  | 2026-07-25 | 2026-08-13 |  |  |
| A46300 |  | Excavation | 4d | 2026-07-25 | 2026-07-28 | A46250, A1190 | 40d |
| A46310 |  | Pipe Laying | 8d | 2026-07-29 | 2026-08-06 | A46300 | 40d |
| A46320 |  | Install Manhole | 4d | 2026-07-29 | 2026-08-02 | A46300 | 46d |
| A46330 |  | Testing & Inspection | 2d | 2026-08-08 | 2026-08-09 | A46310 | 40d |
| A46340 |  | Backfilling & Compaction | 4d | 2026-08-10 | 2026-08-13 | A46330, A46320, A46290 | 40d |
|  | MH-1.12.7 / MH-1.12.8 | **MH-1.12.7 / MH-1.12.8** |  | 2026-07-29 | 2026-08-18 |  |  |
| A46350 |  | Excavation | 4d | 2026-07-29 | 2026-08-02 | A46300, A1190 | 40d |
| A46360 |  | Pipe Laying | 8d | 2026-08-03 | 2026-08-11 | A46350 | 40d |
| A46370 |  | Install Manhole | 4d | 2026-08-03 | 2026-08-06 | A46350 | 46d |
| A46380 |  | Testing & Inspection | 2d | 2026-08-12 | 2026-08-13 | A46360 | 40d |
| A46390 |  | Backfilling & Compaction | 4d | 2026-08-15 | 2026-08-18 | A46380, A46370, A46340 | 40d |
|  | MH-1.12.7.0 / MH-1.12.7.1 | **MH-1.12.7.0 / MH-1.12.7.1** |  | 2026-08-03 | 2026-08-23 |  |  |
| A46400 |  | Excavation | 4d | 2026-08-03 | 2026-08-06 | A46350, A1190 | 40d |
| A46410 |  | Pipe Laying | 8d | 2026-08-08 | 2026-08-16 | A46400 | 40d |
| A46420 |  | Install Manhole | 4d | 2026-08-08 | 2026-08-11 | A46400 | 46d |
| A46430 |  | Testing & Inspection | 2d | 2026-08-17 | 2026-08-18 | A46410 | 40d |
| A46440 |  | Backfilling & Compaction | 4d | 2026-08-19 | 2026-08-23 | A46430, A46420, A46390 | 40d |
|  | MH-1.12.8 / MH-1.12.9 | **MH-1.12.8 / MH-1.12.9** |  | 2026-08-08 | 2026-08-27 |  |  |
| A46450 |  | Excavation | 4d | 2026-08-08 | 2026-08-11 | A46400, A1190 | 40d |
| A46460 |  | Pipe Laying | 8d | 2026-08-12 | 2026-08-20 | A46450 | 40d |
| A46470 |  | Install Manhole | 4d | 2026-08-12 | 2026-08-16 | A46450 | 46d |
| A46480 |  | Testing & Inspection | 2d | 2026-08-22 | 2026-08-23 | A46460 | 40d |
| A46490 |  | Backfilling & Compaction | 4d | 2026-08-24 | 2026-08-27 | A46480, A46470, A46440 | 40d |
|  | MH-1.12.8.0 / MH-1.12.8.1 | **MH-1.12.8.0 / MH-1.12.8.1** |  | 2026-08-12 | 2026-09-01 |  |  |
| A46500 |  | Excavation | 4d | 2026-08-12 | 2026-08-16 | A46450, A1190 | 40d |
| A46510 |  | Pipe Laying | 8d | 2026-08-17 | 2026-08-25 | A46500 | 40d |
| A46520 |  | Install Manhole | 4d | 2026-08-17 | 2026-08-20 | A46500 | 46d |
| A46530 |  | Testing & Inspection | 2d | 2026-08-26 | 2026-08-27 | A46510 | 40d |
| A46540 |  | Backfilling & Compaction | 4d | 2026-08-29 | 2026-09-01 | A46530, A46520, A46490 | 40d |
|  | MH-1.12.9 / MH-1.12.10 | **MH-1.12.9 / MH-1.12.10** |  | 2026-08-17 | 2026-09-06 |  |  |
| A46550 |  | Excavation | 4d | 2026-08-17 | 2026-08-20 | A46500, A1190 | 40d |
| A46560 |  | Pipe Laying | 8d | 2026-08-22 | 2026-08-30 | A46550 | 40d |
| A46570 |  | Install Manhole | 4d | 2026-08-22 | 2026-08-25 | A46550 | 46d |
| A46580 |  | Testing & Inspection | 2d | 2026-08-31 | 2026-09-01 | A46560 | 40d |
| A46590 |  | Backfilling & Compaction | 4d | 2026-09-02 | 2026-09-06 | A46580, A46570, A46540 | 40d |
|  | LR 09 | **LR 09** |  | 2026-03-31 | 2026-06-01 |  |  |
|  | MH-1.12 / MH-1.13 | **MH-1.12 / MH-1.13** |  | 2026-03-31 | 2026-04-20 |  |  |
| A46600 |  | Excavation | 4d | 2026-03-31 | 2026-04-04 | A70120, A1190 | 139d |
| A46610 |  | Pipe Laying | 8d | 2026-04-05 | 2026-04-13 | A46600 | 139d |
| A46620 |  | Install Manhole | 4d | 2026-04-05 | 2026-04-08 | A46600 | 145d |
| A46630 |  | Testing & Inspection | 2d | 2026-04-14 | 2026-04-15 | A46610 | 139d |
| A46640 |  | Backfilling & Compaction | 4d | 2026-04-16 | 2026-04-20 | A46630, A46620 | 139d |
|  | MH-1.14 / MH-1.15 | **MH-1.14 / MH-1.15** |  | 2026-04-05 | 2026-04-25 |  |  |
| A46650 |  | Excavation | 4d | 2026-04-05 | 2026-04-08 | A46600, A1190 | 139d |
| A46660 |  | Pipe Laying | 4d | 2026-04-09 | 2026-04-13 | A46650 | 143d |
| A46670 |  | Install Manhole | 4d | 2026-04-09 | 2026-04-13 | A46650 | 145d |
| A46680 |  | Testing & Inspection | 2d | 2026-04-14 | 2026-04-15 | A46660 | 143d |
| A46690 |  | Backfilling & Compaction | 4d | 2026-04-21 | 2026-04-25 | A46680, A46670, A46640 | 139d |

| ID | WBS | Task | Duration | Start | Finish | Predecessors | Total float |
| --- | --- | --- | --- | --- | --- | --- | --- |
|  | MH-1.15 / MH-1.16 | **MH-1.15 / MH-1.16** |  | 2026-04-09 | 2026-04-29 |  |  |
| A46700 |  | Excavation | 4d | 2026-04-09 | 2026-04-13 | A46650, A1190 | 139d |
| A46710 |  | Pipe Laying | 8d | 2026-04-14 | 2026-04-22 | A46700 | 139d |
| A46720 |  | Install Manhole | 4d | 2026-04-14 | 2026-04-18 | A46700 | 145d |
| A46730 |  | Testing & Inspection | 2d | 2026-04-23 | 2026-04-25 | A46710 | 139d |
| A46740 |  | Backfilling & Compaction | 4d | 2026-04-26 | 2026-04-29 | A46730, A46720, A46690 | 139d |
|  | MH-1.16 / MH-1.17 | **MH-1.16 / MH-1.17** |  | 2026-04-14 | 2026-05-04 |  |  |
| A46750 |  | Excavation | 4d | 2026-04-14 | 2026-04-18 | A46700, A1190 | 139d |
| A46760 |  | Pipe Laying | 8d | 2026-04-19 | 2026-04-27 | A46750 | 139d |
| A46770 |  | Install Manhole | 4d | 2026-04-19 | 2026-04-22 | A46750 | 145d |
| A46780 |  | Testing & Inspection | 2d | 2026-04-28 | 2026-04-29 | A46760 | 139d |
| A46790 |  | Backfilling & Compaction | 4d | 2026-04-30 | 2026-05-04 | A46780, A46770, A46740 | 139d |
|  | MH-1.17.0 / MH-1.17.1 | **MH-1.17.0 / MH-1.17.1** |  | 2026-04-19 | 2026-05-09 |  |  |
| A46800 |  | Excavation | 4d | 2026-04-19 | 2026-04-22 | A46750, A1190 | 139d |
| A46810 |  | Pipe Laying | 8d | 2026-04-23 | 2026-05-02 | A46800 | 139d |
| A46820 |  | Install Manhole | 4d | 2026-04-23 | 2026-04-27 | A46800 | 145d |
| A46830 |  | Testing & Inspection | 2d | 2026-05-03 | 2026-05-04 | A46810 | 139d |
| A46840 |  | Backfilling & Compaction | 4d | 2026-05-05 | 2026-05-09 | A46830, A46820, A46790 | 139d |
|  | MH-1.17.1 / MH-1.17.2 | **MH-1.17.1 / MH-1.17.2** |  | 2026-04-23 | 2026-05-13 |  |  |
| A46850 |  | Excavation | 4d | 2026-04-23 | 2026-04-27 | A46800, A1190 | 139d |
| A46860 |  | Pipe Laying | 4d | 2026-04-28 | 2026-05-02 | A46850 | 143d |
| A46870 |  | Install Manhole | 4d | 2026-04-28 | 2026-05-02 | A46850 | 145d |
| A46880 |  | Testing & Inspection | 2d | 2026-05-03 | 2026-05-04 | A46860 | 143d |
| A46890 |  | Backfilling & Compaction | 4d | 2026-05-10 | 2026-05-13 | A46880, A46870, A46840 | 139d |
|  | MH-1.17.1.0 / MH-1.17.1.1 | **MH-1.17.1.0 / MH-1.17.1.1** |  | 2026-04-28 | 2026-05-18 |  |  |
| A46900 |  | Excavation | 4d | 2026-04-28 | 2026-05-02 | A46850, A1190 | 139d |
| A46910 |  | Pipe Laying | 4d | 2026-05-03 | 2026-05-06 | A46900 | 143d |
| A46920 |  | Install Manhole | 4d | 2026-05-03 | 2026-05-06 | A46900 | 145d |
| A46930 |  | Testing & Inspection | 2d | 2026-05-07 | 2026-05-09 | A46910 | 143d |
| A46940 |  | Backfilling & Compaction | 4d | 2026-05-14 | 2026-05-18 | A46930, A46920, A46890 | 139d |
|  | MH-1.17.2 / MH-1.17.3 | **MH-1.17.2 / MH-1.17.3** |  | 2026-05-03 | 2026-05-23 |  |  |
| A46950 |  | Excavation | 4d | 2026-05-03 | 2026-05-06 | A46900, A1190 | 139d |
| A46960 |  | Pipe Laying | 8d | 2026-05-07 | 2026-05-16 | A46950 | 139d |
| A46970 |  | Install Manhole | 4d | 2026-05-07 | 2026-05-11 | A46950 | 145d |
| A46980 |  | Testing & Inspection | 2d | 2026-05-17 | 2026-05-18 | A46960 | 139d |
| A46990 |  | Backfilling & Compaction | 4d | 2026-05-19 | 2026-05-23 | A46980, A46970, A46940 | 139d |
|  | MH-1.17.2.0 / MH-1.17.2.1 | **MH-1.17.2.0 / MH-1.17.2.1** |  | 2026-05-07 | 2026-05-27 |  |  |
| A47000 |  | Excavation | 4d | 2026-05-07 | 2026-05-11 | A46950, A1190 | 139d |
| A47010 |  | Pipe Laying | 8d | 2026-05-12 | 2026-05-20 | A47000 | 139d |
| A47020 |  | Install Manhole | 4d | 2026-05-12 | 2026-05-16 | A47000 | 145d |
| A47030 |  | Testing & Inspection | 2d | 2026-05-21 | 2026-05-23 | A47010 | 139d |
| A47040 |  | Backfilling & Compaction | 4d | 2026-05-24 | 2026-05-27 | A47030, A47020, A46990 | 139d |
|  | MH-1.17.3 / MH-1.17.4 | **MH-1.17.3 / MH-1.17.4** |  | 2026-05-12 | 2026-06-01 |  |  |
| A47050 |  | Excavation | 4d | 2026-05-12 | 2026-05-16 | A47000, A1190 | 139d |
| A47060 |  | Pipe Laying | 8d | 2026-05-17 | 2026-05-25 | A47050 | 139d |
| A47070 |  | Install Manhole | 4d | 2026-05-17 | 2026-05-20 | A47050 | 145d |
| A47080 |  | Testing & Inspection | 2d | 2026-05-26 | 2026-05-27 | A47060 | 139d |
| A47090 |  | Backfilling & Compaction | 4d | 2026-05-28 | 2026-06-01 | A47080, A47070, A47040 | 139d |
|  | LR 10 | **LR 10** |  | 2026-10-18 | 2026-11-28 |  |  |
|  | MH-2.23.0 / MH-2.23.1 | **MH-2.23.0 / MH-2.23.1** |  | 2026-10-18 | 2026-10-31 |  |  |
| A47100 |  | Excavation | 3d | 2026-10-18 | 2026-10-20 | A69920, A1190 | 2d |
| A47110 |  | Pipe Laying | 3d | 2026-10-21 | 2026-10-24 | A47100 | 20d |
| A47120 |  | Install Manhole | 3d | 2026-10-21 | 2026-10-24 | A47100 | 23d |
| A47130 |  | Testing & Inspection | 3d | 2026-10-25 | 2026-10-27 | A47110 | 20d |
| A47140 |  | Backfilling & Compaction | 3d | 2026-10-28 | 2026-10-31 | A47130, A47120 | 20d |
|  | MH-2.23.1 / MH-2.23.1.1 | **MH-2.23.1 / MH-2.23.1.1** |  | 2026-10-25 | 2026-11-07 |  |  |
| A47200 |  | Excavation | 3d | 2026-10-25 | 2026-10-27 | A47150, A1190 | 15d |
| A47210 |  | Pipe Laying | 3d | 2026-10-28 | 2026-10-31 | A47200 | 20d |
| A47220 |  | Install Manhole | 3d | 2026-10-28 | 2026-10-31 | A47200 | 23d |
| A47230 |  | Testing & Inspection | 3d | 2026-11-01 | 2026-11-03 | A47210 | 20d |
| A47240 |  | Backfilling & Compaction | 3d | 2026-11-04 | 2026-11-07 | A47230, A47220, A47190 | 20d |
|  | MH-2.23.1 / MH-2.23.2 | **MH-2.23.1 / MH-2.23.2** |  | 2026-10-21 | 2026-11-03 |  |  |
| A47150 |  | Excavation | 3d | 2026-10-21 | 2026-10-24 | A47100, A1190 | 15d |
| A47160 |  | Pipe Laying | 3d | 2026-10-25 | 2026-10-27 | A47150 | 20d |
| A47170 |  | Install Manhole | 3d | 2026-10-25 | 2026-10-27 | A47150 | 23d |
| A47180 |  | Testing & Inspection | 3d | 2026-10-28 | 2026-10-31 | A47160 | 20d |
| A47190 |  | Backfilling & Compaction | 3d | 2026-11-01 | 2026-11-03 | A47180, A47170, A47140 | 20d |
|  | MH-2.23.1.0 / MH-2.23.1.1 | **MH-2.23.1.0 / MH-2.23.1.1** |  | 2026-10-28 | 2026-11-10 |  |  |
| A47250 |  | Excavation | 3d | 2026-10-28 | 2026-10-31 | A47200, A1190 | 15d |
| A47260 |  | Pipe Laying | 3d | 2026-11-01 | 2026-11-03 | A47250 | 21d |

| ID | WBS | Task | Duration | Start | Finish | Predecessors | Total float |
| --- | --- | --- | --- | --- | --- | --- | --- |
| A47270 |  | Install Manhole | 3d | 2026-11-01 | 2026-11-03 | A47250 | 23d |
| A47280 |  | Testing & Inspection | 2d | 2026-11-04 | 2026-11-05 | A47260 | 21d |
| A47290 |  | Backfilling & Compaction | 3d | 2026-11-08 | 2026-11-10 | A47280, A47270, A47240 | 20d |
|  | MH-2.23.2 / MH-2.23.3 | **MH-2.23.2 / MH-2.23.3** |  | 2026-11-01 | 2026-11-14 |  |  |
| A47300 |  | Excavation | 3d | 2026-11-01 | 2026-11-03 | A47250, A1190 | 15d |
| A47310 |  | Pipe Laying | 3d | 2026-11-04 | 2026-11-07 | A47300 | 20d |
| A47320 |  | Install Manhole | 3d | 2026-11-04 | 2026-11-07 | A47300 | 23d |
| A47330 |  | Testing & Inspection | 3d | 2026-11-08 | 2026-11-10 | A47310 | 20d |
| A47340 |  | Backfilling & Compaction | 3d | 2026-11-11 | 2026-11-14 | A47330, A47320, A47290 | 20d |
|  | MH-2.23.2.0 / MH-2.23.2.1 | **MH-2.23.2.0 / MH-2.23.2.1** |  | 2026-11-04 | 2026-11-17 |  |  |
| A47350 |  | Excavation | 3d | 2026-11-04 | 2026-11-07 | A47300, A1190 | 15d |
| A47360 |  | Pipe Laying | 3d | 2026-11-08 | 2026-11-10 | A47350 | 20d |
| A47370 |  | Install Manhole | 3d | 2026-11-08 | 2026-11-10 | A47350 | 23d |
| A47380 |  | Testing & Inspection | 3d | 2026-11-11 | 2026-11-14 | A47360 | 20d |
| A47390 |  | Backfilling & Compaction | 3d | 2026-11-15 | 2026-11-17 | A47380, A47370, A47340 | 20d |
|  | MH-2.23.3 / MH-2.23.4 | **MH-2.23.3 / MH-2.23.4** |  | 2026-11-08 | 2026-11-28 |  |  |
| A47400 |  | Excavation | 4d | 2026-11-08 | 2026-11-11 | A47350, A1190 | 15d |
| A47410 |  | Pipe Laying | 8d | 2026-11-12 | 2026-11-21 | A47400 | 15d |
| A47420 |  | Install Manhole | 4d | 2026-11-12 | 2026-11-16 | A47400 | 21d |
| A47430 |  | Testing & Inspection | 2d | 2026-11-22 | 2026-11-23 | A47410 | 15d |
| A47440 |  | Backfilling & Compaction | 4d | 2026-11-24 | 2026-11-28 | A47430, A47420, A47390 | 15d |
|  | LR 11 | **LR 11** |  | 2026-11-12 | 2026-12-02 |  |  |
|  | MH-2.21.4.0 / MH-2.21.4.1 | **MH-2.21.4.0 / MH-2.21.4.1** |  | 2026-11-12 | 2026-11-21 |  |  |
| A47450 |  | Excavation | 2d | 2026-11-12 | 2026-11-14 | A69820, A1190, A47400 | 19d |
| A47460 |  | Pipe Laying | 2d | 2026-11-15 | 2026-11-16 | A47450 | 19d |
| A47470 |  | Install Manhole | 2d | 2026-11-15 | 2026-11-16 | A47450 | 21d |
| A47480 |  | Testing & Inspection | 2d | 2026-11-17 | 2026-11-18 | A47460 | 19d |
| A47490 |  | Backfilling & Compaction | 2d | 2026-11-19 | 2026-11-21 | A47480, A47470 | 19d |
|  | MH-2.21.4.1 / MH-2.21.4.2 | **MH-2.21.4.1 / MH-2.21.4.2** |  | 2026-11-15 | 2026-11-23 |  |  |
| A47500 |  | Excavation | 2d | 2026-11-15 | 2026-11-16 | A47450, A1190 | 19d |
| A47510 |  | Pipe Laying | 2d | 2026-11-17 | 2026-11-18 | A47500 | 19d |
| A47520 |  | Install Manhole | 2d | 2026-11-17 | 2026-11-18 | A47500 | 21d |
| A47530 |  | Testing & Inspection | 2d | 2026-11-19 | 2026-11-21 | A47510 | 19d |
| A47540 |  | Backfilling & Compaction | 2d | 2026-11-22 | 2026-11-23 | A47530, A47520, A47490 | 19d |
|  | MH-2.21.4.1.0 / MH-2.21.4.1.1 | **MH-2.21.4.1.0 / MH-2.21.4.1.1** |  | 2026-11-17 | 2026-11-25 |  |  |
| A47550 |  | Excavation | 2d | 2026-11-17 | 2026-11-18 | A47500, A1190 | 19d |
| A47560 |  | Pipe Laying | 2d | 2026-11-19 | 2026-11-21 | A47550 | 19d |
| A47570 |  | Install Manhole | 2d | 2026-11-19 | 2026-11-21 | A47550 | 21d |
| A47580 |  | Testing & Inspection | 2d | 2026-11-22 | 2026-11-23 | A47560 | 19d |
| A47590 |  | Backfilling & Compaction | 2d | 2026-11-24 | 2026-11-25 | A47580, A47570, A47540 | 19d |
|  | MH-2.21.4.2 / MH-2.21.4.3 | **MH-2.21.4.2 / MH-2.21.4.3** |  | 2026-11-19 | 2026-11-28 |  |  |
| A47600 |  | Excavation | 2d | 2026-11-19 | 2026-11-21 | A47550, A1190 | 19d |
| A47610 |  | Pipe Laying | 2d | 2026-11-22 | 2026-11-23 | A47600 | 19d |
| A47620 |  | Install Manhole | 2d | 2026-11-22 | 2026-11-23 | A47600 | 21d |
| A47630 |  | Testing & Inspection | 2d | 2026-11-24 | 2026-11-25 | A47610 | 19d |
| A47640 |  | Backfilling & Compaction | 2d | 2026-11-26 | 2026-11-28 | A47630, A47620, A47590 | 19d |
|  | MH-2.21.4.2.0 / MH-2.21.4.2.1 | **MH-2.21.4.2.0 / MH-2.21.4.2.1** |  | 2026-11-22 | 2026-11-30 |  |  |
| A47650 |  | Excavation | 2d | 2026-11-22 | 2026-11-23 | A47600, A1190 | 19d |
| A47660 |  | Pipe Laying | 2d | 2026-11-24 | 2026-11-25 | A47650 | 19d |
| A47670 |  | Install Manhole | 2d | 2026-11-24 | 2026-11-25 | A47650 | 21d |
| A47680 |  | Testing & Inspection | 2d | 2026-11-26 | 2026-11-28 | A47660 | 19d |
| A47690 |  | Backfilling & Compaction | 2d | 2026-11-29 | 2026-11-30 | A47680, A47670, A47640 | 19d |
|  | MH-2.21.4.3 / MH-2.21.4.4 | **MH-2.21.4.3 / MH-2.21.4.4** |  | 2026-11-24 | 2026-12-02 |  |  |
| A47700 |  | Excavation | 2d | 2026-11-24 | 2026-11-25 | A47650, A1190 | 19d |
| A47710 |  | Pipe Laying | 2d | 2026-11-26 | 2026-11-28 | A47700 | 19d |
| A47720 |  | Install Manhole | 2d | 2026-11-26 | 2026-11-28 | A47700 | 21d |
| A47730 |  | Testing & Inspection | 2d | 2026-11-29 | 2026-11-30 | A47710 | 19d |
| A47740 |  | Backfilling & Compaction | 2d | 2026-12-01 | 2026-12-02 | A47730, A47720, A47690 | 19d |
|  | LR 12 | **LR 12** |  | 2026-11-01 | 2026-12-14 |  |  |
|  | MH-2.21.6.0 / MH-2.21.6.1 | **MH-2.21.6.0 / MH-2.21.6.1** |  | 2026-11-01 | 2026-11-21 |  |  |
| A47750 |  | Excavation | 4d | 2026-11-01 | 2026-11-04 | A69670, A1190 | 10d |
| A47760 |  | Pipe Laying | 8d | 2026-11-05 | 2026-11-14 | A47750 | 10d |
| A47770 |  | Install Manhole | 4d | 2026-11-05 | 2026-11-09 | A47750 | 16d |
| A47780 |  | Testing & Inspection | 2d | 2026-11-15 | 2026-11-16 | A47760 | 10d |
| A47790 |  | Backfilling & Compaction | 4d | 2026-11-17 | 2026-11-21 | A47780, A47770 | 10d |
|  | MH-2.21.6.1 / MH-2.21.6.2 | **MH-2.21.6.1 / MH-2.21.6.2** |  | 2026-11-05 | 2026-11-25 |  |  |
| A47800 |  | Excavation | 4d | 2026-11-05 | 2026-11-09 | A47750, A1190 | 10d |
| A47810 |  | Pipe Laying | 8d | 2026-11-10 | 2026-11-18 | A47800 | 10d |
| A47820 |  | Install Manhole | 4d | 2026-11-10 | 2026-11-14 | A47800 | 16d |
| A47830 |  | Testing & Inspection | 2d | 2026-11-19 | 2026-11-21 | A47810 | 10d |

| ID | WBS | Task | Duration | Start | Finish | Predecessors | Total float |
| --- | --- | --- | --- | --- | --- | --- | --- |
| A47840 |  | Backfilling & Compaction | 4d | 2026-11-22 | 2026-11-25 | A47830, A47820, A47790 | 10d |
|  | MH-2.21.6.1.0 / MH-2.21.6.1.1 | **MH-2.21.6.1.0 / MH-2.21.6.1.1** |  | 2026-11-10 | 2026-11-30 |  |  |
| A47850 |  | Excavation | 4d | 2026-11-10 | 2026-11-14 | A47800, A1190 | 10d |
| A47860 |  | Pipe Laying | 4d | 2026-11-15 | 2026-11-18 | A47850 | 14d |
| A47870 |  | Install Manhole | 4d | 2026-11-15 | 2026-11-18 | A47850 | 16d |
| A47880 |  | Testing & Inspection | 2d | 2026-11-19 | 2026-11-21 | A47860 | 14d |
| A47890 |  | Backfilling & Compaction | 4d | 2026-11-26 | 2026-11-30 | A47880, A47870, A47840 | 10d |
|  | MH-2.21.6.1.1 / MH-2.21.6.1.2 | **MH-2.21.6.1.1 / MH-2.21.6.1.2** |  | 2026-11-15 | 2026-12-05 |  |  |
| A47900 |  | Excavation | 4d | 2026-11-15 | 2026-11-18 | A47850, A1190 | 10d |
| A47910 |  | Pipe Laying | 4d | 2026-11-19 | 2026-11-23 | A47900 | 14d |
| A47920 |  | Install Manhole | 4d | 2026-11-19 | 2026-11-23 | A47900 | 16d |
| A47930 |  | Testing & Inspection | 2d | 2026-11-24 | 2026-11-25 | A47910 | 14d |
| A47940 |  | Backfilling & Compaction | 4d | 2026-12-01 | 2026-12-05 | A47930, A47920, A47890 | 10d |
|  | MH-2.21.6.2 / MH-2.21.6.3 | **MH-2.21.6.2 / MH-2.21.6.3** |  | 2026-11-19 | 2026-12-09 |  |  |
| A47950 |  | Excavation | 4d | 2026-11-19 | 2026-11-23 | A47900, A1190 | 10d |
| A47960 |  | Pipe Laying | 8d | 2026-11-24 | 2026-12-02 | A47950 | 10d |
| A47970 |  | Install Manhole | 4d | 2026-11-24 | 2026-11-28 | A47950 | 16d |
| A47980 |  | Testing & Inspection | 2d | 2026-12-03 | 2026-12-05 | A47960 | 10d |
| A47990 |  | Backfilling & Compaction | 4d | 2026-12-06 | 2026-12-09 | A47980, A47970, A47940 | 10d |
|  | MH-2.21.6.3 / MH-2.21.6.4 | **MH-2.21.6.3 / MH-2.21.6.4** |  | 2026-11-24 | 2026-12-14 |  |  |
| A48000 |  | Excavation | 4d | 2026-11-24 | 2026-11-28 | A47950, A1190 | 10d |
| A48010 |  | Pipe Laying | 8d | 2026-11-29 | 2026-12-07 | A48000 | 10d |
| A48020 |  | Install Manhole | 4d | 2026-11-29 | 2026-12-02 | A48000 | 16d |
| A48030 |  | Testing & Inspection | 2d | 2026-12-08 | 2026-12-09 | A48010 | 10d |
| A48040 |  | Backfilling & Compaction | 4d | 2026-12-10 | 2026-12-14 | A48030, A48020, A47990 | 10d |
|  | LR 13 | **LR 13** |  | 2026-05-26 | 2026-07-08 |  |  |
|  | MH-1.13 / MH-1.14 | **MH-1.13 / MH-1.14** |  | 2026-05-26 | 2026-06-15 |  |  |
| A48050 |  | Excavation | 4d | 2026-05-26 | 2026-05-30 | A69520, A1190 | 107d |
| A48060 |  | Pipe Laying | 8d | 2026-05-31 | 2026-06-08 | A48050 | 107d |
| A48070 |  | Install Manhole | 4d | 2026-05-31 | 2026-06-03 | A48050 | 113d |
| A48080 |  | Testing & Inspection | 2d | 2026-06-09 | 2026-06-10 | A48060 | 107d |
| A48090 |  | Backfilling & Compaction | 4d | 2026-06-11 | 2026-06-15 | A48080, A48070 | 107d |
|  | MH-1.15.0 / MH-1.15.1 | **MH-1.15.0 / MH-1.15.1** |  | 2026-05-31 | 2026-06-20 |  |  |
| A48100 |  | Excavation | 4d | 2026-05-31 | 2026-06-03 | A48050, A1190 | 107d |
| A48110 |  | Pipe Laying | 4d | 2026-06-04 | 2026-06-08 | A48100 | 111d |
| A48120 |  | Install Manhole | 4d | 2026-06-04 | 2026-06-08 | A48100 | 113d |
| A48130 |  | Testing & Inspection | 2d | 2026-06-09 | 2026-06-10 | A48110 | 111d |
| A48140 |  | Backfilling & Compaction | 4d | 2026-06-16 | 2026-06-20 | A48130, A48120, A48090 | 107d |
|  | MH-1.15.1 / MH-1.15.2 | **MH-1.15.1 / MH-1.15.2** |  | 2026-06-04 | 2026-06-24 |  |  |
| A48150 |  | Excavation | 4d | 2026-06-04 | 2026-06-08 | A48100, A1190 | 107d |
| A48160 |  | Pipe Laying | 4d | 2026-06-09 | 2026-06-13 | A48150 | 111d |
| A48170 |  | Install Manhole | 4d | 2026-06-09 | 2026-06-13 | A48150 | 113d |
| A48180 |  | Testing & Inspection | 2d | 2026-06-14 | 2026-06-15 | A48160 | 111d |
| A48190 |  | Backfilling & Compaction | 4d | 2026-06-21 | 2026-06-24 | A48180, A48170, A48140 | 107d |
|  | MH-1.15.2 / MH-1.15.3 | **MH-1.15.2 / MH-1.15.3** |  | 2026-06-09 | 2026-06-29 |  |  |
| A48200 |  | Excavation | 4d | 2026-06-09 | 2026-06-13 | A48150, A1190 | 107d |
| A48210 |  | Pipe Laying | 8d | 2026-06-14 | 2026-06-22 | A48200 | 107d |
| A48220 |  | Install Manhole | 4d | 2026-06-14 | 2026-06-17 | A48200 | 113d |
| A48230 |  | Testing & Inspection | 2d | 2026-06-23 | 2026-06-24 | A48210 | 107d |
| A48240 |  | Backfilling & Compaction | 4d | 2026-06-25 | 2026-06-29 | A48230, A48220, A48190 | 107d |
|  | MH-1.15.2.0 / MH-1.15.2.1 | **MH-1.15.2.0 / MH-1.15.2.1** |  | 2026-06-14 | 2026-07-04 |  |  |
| A48250 |  | Excavation | 4d | 2026-06-14 | 2026-06-17 | A48200, A1190 | 107d |
| A48260 |  | Pipe Laying | 8d | 2026-06-18 | 2026-06-27 | A48250 | 107d |
| A48270 |  | Install Manhole | 4d | 2026-06-18 | 2026-06-22 | A48250 | 113d |
| A48280 |  | Testing & Inspection | 2d | 2026-06-28 | 2026-06-29 | A48260 | 107d |
| A48290 |  | Backfilling & Compaction | 4d | 2026-06-30 | 2026-07-04 | A48280, A48270, A48240 | 107d |
|  | MH-1.15.3 / MH-1.15.4 | **MH-1.15.3 / MH-1.15.4** |  | 2026-06-18 | 2026-07-08 |  |  |
| A48300 |  | Excavation | 4d | 2026-06-18 | 2026-06-22 | A48250, A1190 | 107d |
| A48310 |  | Pipe Laying | 8d | 2026-06-23 | 2026-07-01 | A48300 | 107d |
| A48320 |  | Install Manhole | 4d | 2026-06-23 | 2026-06-27 | A48300 | 113d |
| A48330 |  | Testing & Inspection | 2d | 2026-07-02 | 2026-07-04 | A48310 | 107d |
| A48340 |  | Backfilling & Compaction | 4d | 2026-07-05 | 2026-07-08 | A48330, A48320, A48290 | 107d |
|  | LR 14 | **LR 14** |  | 2026-06-14 | 2026-07-13 |  |  |
|  | MH-1.17 / MH-1.18 | **MH-1.17 / MH-1.18** |  | 2026-06-14 | 2026-06-29 |  |  |
| A48350 |  | Excavation | 4d | 2026-06-14 | 2026-06-17 | A69370, A1190 | 103d |
| A48360 |  | Pipe Laying | 4d | 2026-06-18 | 2026-06-22 | A48350 | 107d |
| A48370 |  | Install Manhole | 4d | 2026-06-18 | 2026-06-22 | A48350 | 109d |
| A48380 |  | Testing & Inspection | 2d | 2026-06-23 | 2026-06-24 | A48360 | 107d |
| A48390 |  | Backfilling & Compaction | 4d | 2026-06-25 | 2026-06-29 | A48380, A48370 | 107d |
|  | MH-1.18 / MH-1.19 | **MH-1.18 / MH-1.19** |  | 2026-06-18 | 2026-07-04 |  |  |

| ID | WBS | Task | Duration | Start | Finish | Predecessors | Total float |
| --- | --- | --- | --- | --- | --- | --- | --- |
| A48400 |  | Excavation | 4d | 2026-06-18 | 2026-06-22 | A48350, A1190 | 103d |
| A48410 |  | Pipe Laying | 4d | 2026-06-23 | 2026-06-27 | A48400 | 107d |
| A48420 |  | Install Manhole | 4d | 2026-06-23 | 2026-06-27 | A48400 | 109d |
| A48430 |  | Testing & Inspection | 2d | 2026-06-28 | 2026-06-29 | A48410 | 107d |
| A48440 |  | Backfilling & Compaction | 4d | 2026-06-30 | 2026-07-04 | A48430, A48420, A48390 | 107d |
|  | MH-1.19.0 / MH-1.19.1 | **MH-1.19.0 / MH-1.19.1** |  | 2026-06-23 | 2026-07-13 |  |  |
| A48450 |  | Excavation | 4d | 2026-06-23 | 2026-06-27 | A48400, A1190 | 103d |
| A48460 |  | Pipe Laying | 8d | 2026-06-28 | 2026-07-06 | A48450 | 103d |
| A48470 |  | Install Manhole | 4d | 2026-06-28 | 2026-07-01 | A48450 | 109d |
| A48480 |  | Testing & Inspection | 2d | 2026-07-07 | 2026-07-08 | A48460 | 103d |
| A48490 |  | Backfilling & Compaction | 4d | 2026-07-09 | 2026-07-13 | A48480, A48470, A48440 | 103d |
|  | LR 15 | **LR 15** |  | 2026-10-20 | 2026-11-25 |  |  |
|  | MH-1.19 / MH-1.20 | **MH-1.19 / MH-1.20** |  | 2026-10-20 | 2026-11-07 |  |  |
| A48500 |  | Excavation | 4d | 2026-10-20 | 2026-10-24 | A69170, A1190 | 15d |
| A48510 |  | Pipe Laying | 4d | 2026-10-25 | 2026-10-28 | A48500 | 29d |
| A48520 |  | Install Manhole | 4d | 2026-10-25 | 2026-10-28 | A48500 | 33d |
| A48530 |  | Testing & Inspection | 4d | 2026-10-29 | 2026-11-02 | A48510 | 29d |
| A48540 |  | Backfilling & Compaction | 4d | 2026-11-03 | 2026-11-07 | A48530, A48520 | 29d |
|  | MH-1.20 / MH-1.20.1 | **MH-1.20 / MH-1.20.1** |  | 2026-10-25 | 2026-11-11 |  |  |
| A48550 |  | Excavation | 4d | 2026-10-25 | 2026-10-28 | A48500, A1190 | 25d |
| A48560 |  | Pipe Laying | 4d | 2026-10-29 | 2026-11-02 | A48550 | 29d |
| A48570 |  | Install Manhole | 4d | 2026-10-29 | 2026-11-02 | A48550 | 33d |
| A48580 |  | Testing & Inspection | 4d | 2026-11-03 | 2026-11-07 | A48560 | 29d |
| A48590 |  | Backfilling & Compaction | 4d | 2026-11-08 | 2026-11-11 | A48580, A48570, A48540 | 29d |
|  | MH-1.20 / MH-1.21 | **MH-1.20 / MH-1.21** |  | 2026-10-29 | 2026-11-16 |  |  |
| A48600 |  | Excavation | 4d | 2026-10-29 | 2026-11-02 | A48550, A1190 | 25d |
| A48610 |  | Pipe Laying | 4d | 2026-11-03 | 2026-11-07 | A48600 | 29d |
| A48620 |  | Install Manhole | 4d | 2026-11-03 | 2026-11-07 | A48600 | 33d |
| A48630 |  | Testing & Inspection | 4d | 2026-11-08 | 2026-11-11 | A48610 | 29d |
| A48640 |  | Backfilling & Compaction | 4d | 2026-11-12 | 2026-11-16 | A48630, A48620, A48590 | 29d |
|  | MH-1.21 / MH-1.21.1 | **MH-1.21 / MH-1.21.1** |  | 2026-11-08 | 2026-11-25 |  |  |
| A48700 |  | Excavation | 4d | 2026-11-08 | 2026-11-11 | A48650, A1190 | 25d |
| A48710 |  | Pipe Laying | 4d | 2026-11-12 | 2026-11-16 | A48700 | 29d |
| A48720 |  | Install Manhole | 4d | 2026-11-12 | 2026-11-16 | A48700 | 33d |
| A48730 |  | Testing & Inspection | 4d | 2026-11-17 | 2026-11-21 | A48710 | 29d |
| A48740 |  | Backfilling & Compaction | 4d | 2026-11-22 | 2026-11-25 | A48730, A48720, A48690 | 29d |
|  | MH-1.21 / MH-1.22 | **MH-1.21 / MH-1.22** |  | 2026-11-03 | 2026-11-21 |  |  |
| A48650 |  | Excavation | 4d | 2026-11-03 | 2026-11-07 | A48600, A1190 | 25d |
| A48660 |  | Pipe Laying | 4d | 2026-11-08 | 2026-11-11 | A48650 | 29d |
| A48670 |  | Install Manhole | 4d | 2026-11-08 | 2026-11-11 | A48650 | 33d |
| A48680 |  | Testing & Inspection | 4d | 2026-11-12 | 2026-11-16 | A48660 | 29d |
| A48690 |  | Backfilling & Compaction | 4d | 2026-11-17 | 2026-11-21 | A48680, A48670, A48640 | 29d |
|  | LR 16 | **LR 16** |  | 2026-11-12 | 2026-11-30 |  |  |
|  | MH-2.4 / MH-2.5 | **MH-2.4 / MH-2.5** |  | 2026-11-12 | 2026-11-30 |  |  |
| A48750 |  | Excavation | 4d | 2026-11-12 | 2026-11-16 | A48700, A1190 | 25d |
| A48760 |  | Pipe Laying | 4d | 2026-11-17 | 2026-11-21 | A48750 | 25d |
| A48770 |  | Install Manhole | 4d | 2026-11-17 | 2026-11-21 | A48750 | 29d |
| A48780 |  | Testing & Inspection | 4d | 2026-11-22 | 2026-11-25 | A48760 | 25d |
| A48790 |  | Backfilling & Compaction | 4d | 2026-11-26 | 2026-11-30 | A48780, A48770 | 25d |
|  | EX LR 01 | **EX LR 01** |  | 2026-11-17 | 2026-12-12 |  |  |
|  | MH-1.8 / MH-1.9 | **MH-1.8 / MH-1.9** |  | 2026-11-17 | 2026-12-07 |  |  |
| A48800 |  | Excavation | 4d | 2026-11-17 | 2026-11-21 | A48750, A1190 | 32d |
| A48810 |  | Pipe Laying | 8d | 2026-11-22 | 2026-11-30 | A48800 | 32d |
| A48820 |  | Install Manhole | 4d | 2026-11-22 | 2026-11-25 | A48800 | 38d |
| A48830 |  | Testing & Inspection | 2d | 2026-12-01 | 2026-12-02 | A48810 | 32d |
| A48840 |  | Backfilling & Compaction | 4d | 2026-12-03 | 2026-12-07 | A48830, A48820 | 32d |
|  | MH-1.9 / MH-1.9 | **MH-1.9 / MH-1.9** |  | 2026-11-22 | 2026-12-12 |  |  |
| A48850 |  | Excavation | 4d | 2026-11-22 | 2026-11-25 | A48800, A1190 | 32d |
| A48860 |  | Pipe Laying | 8d | 2026-11-26 | 2026-12-05 | A48850 | 32d |
| A48870 |  | Install Manhole | 4d | 2026-11-26 | 2026-11-30 | A48850 | 38d |
| A48880 |  | Testing & Inspection | 2d | 2026-12-06 | 2026-12-07 | A48860 | 32d |
| A48890 |  | Backfilling & Compaction | 4d | 2026-12-08 | 2026-12-12 | A48880, A48870, A48840 | 32d |
|  | COLLECTOR R- 01 | **COLLECTOR R- 01** |  | 2026-08-13 | 2026-09-07 |  |  |
|  | MH-2.19.0 / MH-2.19.1 | **MH-2.19.0 / MH-2.19.1** |  | 2026-08-13 | 2026-09-02 |  |  |
| A48900 |  | Excavation | 4d | 2026-08-13 | 2026-08-17 | A68970, A68570, A1190 | 63d |
| A48910 |  | Pipe Laying | 8d | 2026-08-18 | 2026-08-26 | A48900 | 63d |
| A48920 |  | Install Manhole | 4d | 2026-08-18 | 2026-08-22 | A48900 | 69d |
| A48930 |  | Testing & Inspection | 2d | 2026-08-27 | 2026-08-29 | A48910 | 63d |
| A48940 |  | Backfilling & Compaction | 4d | 2026-08-30 | 2026-09-02 | A48930, A48920 | 63d |
|  | MH-2.19.1 / MH-2.19.2 | **MH-2.19.1 / MH-2.19.2** |  | 2026-08-18 | 2026-09-07 |  |  |

| ID | WBS | Task | Duration | Start | Finish | Predecessors | Total float |
| --- | --- | --- | --- | --- | --- | --- | --- |
| A48950 |  | Excavation | 4d | 2026-08-18 | 2026-08-22 | A48900, A1190 | 63d |
| A48960 |  | Pipe Laying | 8d | 2026-08-23 | 2026-08-31 | A48950 | 63d |
| A48970 |  | Install Manhole | 4d | 2026-08-23 | 2026-08-26 | A48950 | 69d |
| A48980 |  | Testing & Inspection | 2d | 2026-09-01 | 2026-09-02 | A48960 | 63d |
| A48990 |  | Backfilling & Compaction | 4d | 2026-09-03 | 2026-09-07 | A48980, A48970, A48940 | 63d |
|  | EX LR 02 | **EX LR 02** |  | 2026-11-09 | 2026-12-24 |  |  |
|  | MH-1.1 / MH-1.2 | **MH-1.1 / MH-1.2** |  | 2026-11-09 | 2026-11-26 |  |  |
| A49000 |  | Excavation | 4d | 2026-11-09 | 2026-11-12 | A69020, A1190 | 1d |
| A49010 |  | Pipe Laying | 4d | 2026-11-14 | 2026-11-17 | A49000 | 21d |
| A49020 |  | Install Manhole | 4d | 2026-11-14 | 2026-11-17 | A49000 | 25d |
| A49030 |  | Testing & Inspection | 4d | 2026-11-18 | 2026-11-22 | A49010 | 21d |
| A49040 |  | Backfilling & Compaction | 4d | 2026-11-23 | 2026-11-26 | A49030, A49020 | 21d |
|  | MH-1.2 / MH-1.3 | **MH-1.2 / MH-1.3** |  | 2026-11-14 | 2026-12-01 |  |  |
| A49050 |  | Excavation | 4d | 2026-11-14 | 2026-11-17 | A49000, A1190 | 21d |
| A49060 |  | Pipe Laying | 4d | 2026-11-18 | 2026-11-22 | A49050 | 21d |
| A49070 |  | Install Manhole | 4d | 2026-11-18 | 2026-11-22 | A49050 | 25d |
| A49080 |  | Testing & Inspection | 4d | 2026-11-23 | 2026-11-26 | A49060 | 21d |
| A49090 |  | Backfilling & Compaction | 4d | 2026-11-28 | 2026-12-01 | A49080, A49070, A49040 | 21d |
|  | MH-1.3 / MH-1.4 | **MH-1.3 / MH-1.4** |  | 2026-11-18 | 2026-12-06 |  |  |
| A49100 |  | Excavation | 4d | 2026-11-18 | 2026-11-22 | A49050, A1190 | 21d |
| A49110 |  | Pipe Laying | 4d | 2026-11-23 | 2026-11-26 | A49100 | 21d |
| A49120 |  | Install Manhole | 4d | 2026-11-23 | 2026-11-26 | A49100 | 25d |
| A49130 |  | Testing & Inspection | 4d | 2026-11-28 | 2026-12-01 | A49110 | 21d |
| A49140 |  | Backfilling & Compaction | 4d | 2026-12-02 | 2026-12-06 | A49130, A49120, A49090 | 21d |
|  | MH-1.4 / MH-1.5 | **MH-1.4 / MH-1.5** |  | 2026-11-23 | 2026-12-10 |  |  |
| A49150 |  | Excavation | 4d | 2026-11-23 | 2026-11-26 | A49100, A1190 | 21d |
| A49160 |  | Pipe Laying | 4d | 2026-11-28 | 2026-12-01 | A49150 | 21d |
| A49170 |  | Install Manhole | 4d | 2026-11-28 | 2026-12-01 | A49150 | 25d |
| A49180 |  | Testing & Inspection | 4d | 2026-12-02 | 2026-12-06 | A49160 | 21d |
| A49190 |  | Backfilling & Compaction | 4d | 2026-12-07 | 2026-12-10 | A49180, A49170, A49140 | 21d |
|  | MH-1.5 / MH-1.6 | **MH-1.5 / MH-1.6** |  | 2026-11-28 | 2026-12-15 |  |  |
| A49200 |  | Excavation | 4d | 2026-11-28 | 2026-12-01 | A49150, A1190 | 21d |
| A49210 |  | Pipe Laying | 4d | 2026-12-02 | 2026-12-06 | A49200 | 21d |
| A49220 |  | Install Manhole | 4d | 2026-12-02 | 2026-12-06 | A49200 | 25d |
| A49230 |  | Testing & Inspection | 4d | 2026-12-07 | 2026-12-10 | A49210 | 21d |
| A49240 |  | Backfilling & Compaction | 4d | 2026-12-12 | 2026-12-15 | A49230, A49220, A49190 | 21d |
|  | MH-1.6 / MH-1.7 | **MH-1.6 / MH-1.7** |  | 2026-12-02 | 2026-12-20 |  |  |
| A49250 |  | Excavation | 4d | 2026-12-02 | 2026-12-06 | A49200, A1190 | 21d |
| A49260 |  | Pipe Laying | 4d | 2026-12-07 | 2026-12-10 | A49250 | 21d |
| A49270 |  | Install Manhole | 4d | 2026-12-07 | 2026-12-10 | A49250 | 25d |
| A49280 |  | Testing & Inspection | 4d | 2026-12-12 | 2026-12-15 | A49260 | 21d |
| A49290 |  | Backfilling & Compaction | 4d | 2026-12-16 | 2026-12-20 | A49280, A49270, A49240 | 21d |
|  | MH-1.7 / MH-1.8 | **MH-1.7 / MH-1.8** |  | 2026-12-07 | 2026-12-24 |  |  |
| A49300 |  | Excavation | 4d | 2026-12-07 | 2026-12-10 | A49250, A1190 | 21d |
| A49310 |  | Pipe Laying | 4d | 2026-12-12 | 2026-12-15 | A49300 | 21d |
| A49320 |  | Install Manhole | 4d | 2026-12-12 | 2026-12-15 | A49300 | 25d |
| A49330 |  | Testing & Inspection | 4d | 2026-12-16 | 2026-12-20 | A49310 | 21d |
| A49340 |  | Backfilling & Compaction | 4d | 2026-12-21 | 2026-12-24 | A49330, A49320, A49290 | 21d |
|  | EX LR 03 | **EX LR 03** |  | 2026-11-14 | 2026-12-29 |  |  |
|  | MH-1.10.2 / MH-1.10.3 | **MH-1.10.2 / MH-1.10.3** |  | 2026-11-14 | 2026-12-01 |  |  |
| A49350 |  | Excavation | 4d | 2026-11-14 | 2026-11-17 | A49000, A1190 | 1d |
| A49360 |  | Pipe Laying | 4d | 2026-11-18 | 2026-11-22 | A49350 | 17d |
| A49370 |  | Install Manhole | 4d | 2026-11-18 | 2026-11-22 | A49350 | 21d |
| A49380 |  | Testing & Inspection | 4d | 2026-11-23 | 2026-11-26 | A49360 | 17d |
| A49390 |  | Backfilling & Compaction | 4d | 2026-11-28 | 2026-12-01 | A49380, A49370 | 17d |
|  | MH-1.10.3 / MH-1.10.4 | **MH-1.10.3 / MH-1.10.4** |  | 2026-11-18 | 2026-12-06 |  |  |
| A49400 |  | Excavation | 4d | 2026-11-18 | 2026-11-22 | A49350, A1190 | 1d |
| A49410 |  | Pipe Laying | 4d | 2026-11-23 | 2026-11-26 | A49400 | 17d |
| A49420 |  | Install Manhole | 4d | 2026-11-23 | 2026-11-26 | A49400 | 21d |
| A49430 |  | Testing & Inspection | 4d | 2026-11-28 | 2026-12-01 | A49410 | 17d |
| A49440 |  | Backfilling & Compaction | 4d | 2026-12-02 | 2026-12-06 | A49430, A49420, A49390 | 17d |
|  | MH-1.10.4 / MH-1.10.5 | **MH-1.10.4 / MH-1.10.5** |  | 2026-11-23 | 2026-12-10 |  |  |
| A49450 |  | Excavation | 4d | 2026-11-23 | 2026-11-26 | A49400, A1190 | 1d |
| A49460 |  | Pipe Laying | 4d | 2026-11-28 | 2026-12-01 | A49450 | 17d |
| A49470 |  | Install Manhole | 4d | 2026-11-28 | 2026-12-01 | A49450 | 21d |
| A49480 |  | Testing & Inspection | 4d | 2026-12-02 | 2026-12-06 | A49460 | 17d |
| A49490 |  | Backfilling & Compaction | 4d | 2026-12-07 | 2026-12-10 | A49480, A49470, A49440 | 17d |
|  | MH-1.10.5 / MH-1.10.6 | **MH-1.10.5 / MH-1.10.6** |  | 2026-11-28 | 2026-12-15 |  |  |
| A49500 |  | Excavation | 4d | 2026-11-28 | 2026-12-01 | A49450, A1190 | 1d |
| A49510 |  | Pipe Laying | 4d | 2026-12-02 | 2026-12-06 | A49500 | 17d |

| ID | WBS | Task | Duration | Start | Finish | Predecessors | Total float |
| --- | --- | --- | --- | --- | --- | --- | --- |
| A49520 |  | Install Manhole | 4d | 2026-12-02 | 2026-12-06 | A49500 | 21d |
| A49530 |  | Testing & Inspection | 4d | 2026-12-07 | 2026-12-10 | A49510 | 17d |
| A49540 |  | Backfilling & Compaction | 4d | 2026-12-12 | 2026-12-15 | A49530, A49520, A49490 | 17d |
|  | MH-1.10.6 / MH-1.10.7 | **MH-1.10.6 / MH-1.10.7** |  | 2026-12-02 | 2026-12-20 |  |  |
| A49550 |  | Excavation | 4d | 2026-12-02 | 2026-12-06 | A49500, A1190 | 1d |
| A49560 |  | Pipe Laying | 4d | 2026-12-07 | 2026-12-10 | A49550 | 17d |
| A49570 |  | Install Manhole | 4d | 2026-12-07 | 2026-12-10 | A49550 | 21d |
| A49580 |  | Testing & Inspection | 4d | 2026-12-12 | 2026-12-15 | A49560 | 17d |
| A49590 |  | Backfilling & Compaction | 4d | 2026-12-16 | 2026-12-20 | A49580, A49570, A49540 | 17d |
|  | MH-1.10.7 / MH-1.10.8 | **MH-1.10.7 / MH-1.10.8** |  | 2026-12-07 | 2026-12-24 |  |  |
| A49600 |  | Excavation | 4d | 2026-12-07 | 2026-12-10 | A49550, A1190 | 1d |
| A49610 |  | Pipe Laying | 4d | 2026-12-12 | 2026-12-15 | A49600 | 17d |
| A49620 |  | Install Manhole | 4d | 2026-12-12 | 2026-12-15 | A49600 | 21d |
| A49630 |  | Testing & Inspection | 4d | 2026-12-16 | 2026-12-20 | A49610 | 17d |
| A49640 |  | Backfilling & Compaction | 4d | 2026-12-21 | 2026-12-24 | A49630, A49620, A49590 | 17d |
|  | MH-1.10.8 / MH-1.10.9 | **MH-1.10.8 / MH-1.10.9** |  | 2026-12-12 | 2026-12-29 |  |  |
| A49650 |  | Excavation | 4d | 2026-12-12 | 2026-12-15 | A49600, A1190 | 1d |
| A49660 |  | Pipe Laying | 4d | 2026-12-16 | 2026-12-20 | A49650 | 17d |
| A49670 |  | Install Manhole | 4d | 2026-12-16 | 2026-12-20 | A49650 | 21d |
| A49680 |  | Testing & Inspection | 4d | 2026-12-21 | 2026-12-24 | A49660 | 17d |
| A49690 |  | Backfilling & Compaction | 4d | 2026-12-26 | 2026-12-29 | A49680, A49670, A49640 | 17d |
|  | EX LR 016 | **EX LR 016** |  | 2026-12-16 | 2027-01-17 |  |  |
|  | MH-2.0 / MH-2.1 | **MH-2.0 / MH-2.1** |  | 2026-12-16 | 2027-01-03 |  |  |
| A49700 |  | Excavation | 4d | 2026-12-16 | 2026-12-20 | A49650, A1190 | 1d |
| A49710 |  | Pipe Laying | 4d | 2026-12-21 | 2026-12-24 | A49700 | 1d |
| A49720 |  | Install Manhole | 4d | 2026-12-21 | 2026-12-24 | A49700 | 5d |
| A49730 |  | Testing & Inspection | 4d | 2026-12-26 | 2026-12-29 | A49710 | 1d |
| A49740 |  | Backfilling & Compaction | 4d | 2026-12-30 | 2027-01-03 | A49730, A49720 | 1d |
|  | MH-2.1 / MH-2.2 | **MH-2.1 / MH-2.2** |  | 2026-12-21 | 2027-01-07 |  |  |
| A49750 |  | Excavation | 4d | 2026-12-21 | 2026-12-24 | A49700, A1190 | 1d |
| A49760 |  | Pipe Laying | 4d | 2026-12-26 | 2026-12-29 | A49750 | 1d |
| A49770 |  | Install Manhole | 4d | 2026-12-26 | 2026-12-29 | A49750 | 5d |
| A49780 |  | Testing & Inspection | 4d | 2026-12-30 | 2027-01-03 | A49760 | 1d |
| A49790 |  | Backfilling & Compaction | 4d | 2027-01-04 | 2027-01-07 | A49780, A49770, A49740 | 1d |
|  | MH-2.2 / MH-2.3 | **MH-2.2 / MH-2.3** |  | 2026-12-26 | 2027-01-12 |  |  |
| A49800 |  | Excavation | 4d | 2026-12-26 | 2026-12-29 | A49750, A1190 | 1d |
| A49810 |  | Pipe Laying | 4d | 2026-12-30 | 2027-01-03 | A49800 | 1d |
| A49820 |  | Install Manhole | 4d | 2026-12-30 | 2027-01-03 | A49800 | 5d |
| A49830 |  | Testing & Inspection | 4d | 2027-01-04 | 2027-01-07 | A49810 | 1d |
| A49840 |  | Backfilling & Compaction | 4d | 2027-01-09 | 2027-01-12 | A49830, A49820, A49790 | 1d |
|  | MH-2.3 / MH-2.4 | **MH-2.3 / MH-2.4** |  | 2026-12-30 | 2027-01-17 |  |  |
| A49850 |  | Excavation | 4d | 2026-12-30 | 2027-01-03 | A49800, A1190 | 1d |
| A49860 |  | Pipe Laying | 4d | 2027-01-04 | 2027-01-07 | A49850 | 1d |
| A49870 |  | Install Manhole | 4d | 2027-01-04 | 2027-01-07 | A49850 | 5d |
| A49880 |  | Testing & Inspection | 4d | 2027-01-09 | 2027-01-12 | A49860 | 1d |
| A49890 |  | Backfilling & Compaction | 4d | 2027-01-13 | 2027-01-17 | A49880, A49870, A49840 | 1d |
|  | PW | **POTABLE NETWORK** |  | 2026-08-18 | 2027-01-24 |  |  |
|  | R1 | **Road 1** |  | 2026-10-21 | 2027-01-21 |  |  |
| A86670 |  | Road Crossing Works | 12d | 2026-10-21 | 2026-11-03 | A39700, A47100 | 24d |
| A86610 |  | Trenching & Bedding | 10d | 2026-10-27 | 2026-11-07 | A86670 SS, A1340, A1350, A1360, A1370, A1380, A11010, A11000, A10990, A11100, A11050, A11060, A86670 FF | 21d |
| A86620 |  | Pipe Laying | 17d | 2026-10-31 | 2026-11-18 | A86610 SS+3d, A86670 SS+4d, A86610 FF+3d, A86670 FF+4d | 21d |
| A86640 |  | Testing | 4d | 2026-11-19 | 2026-11-23 | A86620 | 21d |
| A86630 |  | Backfilling & Compaction | 8d | 2026-11-24 | 2026-12-02 | A86640 | 47d |
| A86650 |  | Chambers Construction works | 16d | 2026-11-24 | 2026-12-12 | A86640, A11030 | 21d |
| A86660 |  | Valves & Fittings Installation | 18d | 2027-01-02 | 2027-01-21 | A86650, A11180, A11170, A11020 | 4d |
|  | R11 | **Road 2** |  | 2026-10-21 | 2027-01-21 |  |  |
| A86690 |  | Road Crossing Works | 16d | 2026-10-21 | 2026-11-08 | A41300, A47100 | 18d |
| A86680 |  | Trenching & Bedding | 14d | 2026-10-24 | 2026-11-08 | A86690 SS, A41300, A86690 FF | 18d |
| A86700 |  | Pipe Laying | 18d | 2026-11-02 | 2026-11-22 | A86680 SS+8d, A86690 SS+8d, A86680 FF+8d, A86690 FF+8d | 18d |
| A86710 |  | Testing | 4d | 2026-11-23 | 2026-11-26 | A86700, A86700 FF | 18d |
| A86720 |  | Backfilling & Compaction | 16d | 2026-11-28 | 2026-12-15 | A86710, A86710 FF | 36d |
| A86730 |  | Chambers Construction works | 16d | 2026-11-28 | 2026-12-15 | A86710 | 18d |
| A86740 |  | Valves & Fittings Installation | 18d | 2027-01-02 | 2027-01-21 | A86730, A11180, A11020 | 4d |
|  | R12 | **Road 3** |  | 2026-11-25 | 2027-01-20 |  |  |
| A86760 |  | Road Crossing Works | 14d | 2026-11-25 | 2026-12-10 | A43440 | 5d |
| A86750 |  | Trenching & Bedding | 10d | 2026-11-30 | 2026-12-10 | A86760 SS, A86760 FF | 5d |
| A86770 |  | Pipe Laying | 14d | 2026-12-09 | 2026-12-24 | A86750 SS+8d, A86760 SS+8d, A86750 FF+8d, A86760 FF+8d | 5d |
| A86780 |  | Testing | 4d | 2026-12-26 | 2026-12-29 | A86770, A86770 FF | 5d |
| A86790 |  | Backfilling & Compaction | 7d | 2026-12-30 | 2027-01-06 | A86780, A86780 FF | 17d |
| A86800 |  | Chambers Construction works | 8d | 2026-12-30 | 2027-01-07 | A86780 | 5d |

| ID | WBS | Task | Duration | Start | Finish | Predecessors | Total float |
| --- | --- | --- | --- | --- | --- | --- | --- |
| A86810 |  | Valves & Fittings Installation | 11d | 2027-01-09 | 2027-01-20 | A86800, A11180, A11020 | 5d |
|  | R13 | **Road 4** |  | 2026-10-17 | 2027-01-21 |  |  |
| A86830 |  | Road Crossing Works | 16d | 2026-10-17 | 2026-11-03 | A44040 | 22d |
| A86820 |  | Trenching & Bedding | 14d | 2026-10-19 | 2026-11-03 | A86830 SS, A86830 FF | 22d |
| A86840 |  | Pipe Laying | 18d | 2026-10-28 | 2026-11-17 | A86820 SS+8d, A86830 SS+8d, A86820 FF+8d, A86830 FF+8d | 22d |
| A86850 |  | Testing | 4d | 2026-11-18 | 2026-11-22 | A86840, A86840 FF | 22d |
| A86860 |  | Backfilling & Compaction | 16d | 2026-11-23 | 2026-12-10 | A86850, A86850 FF | 40d |
| A86870 |  | Chambers Construction works | 16d | 2026-11-23 | 2026-12-10 | A86850 | 22d |
| A86880 |  | Valves & Fittings Installation | 18d | 2027-01-02 | 2027-01-21 | A86870, A11180, A11020 | 4d |
|  | R14 | **Road 5** |  | 2026-10-21 | 2027-01-21 |  |  |
| A86900 |  | Road Crossing Works | 16d | 2026-10-21 | 2026-11-08 | A44740, A47100 | 18d |
| A86890 |  | Trenching & Bedding | 14d | 2026-10-24 | 2026-11-08 | A86900 SS, A86900 FF | 18d |
| A86910 |  | Pipe Laying | 18d | 2026-11-02 | 2026-11-22 | A86890 SS+8d, A86900 SS+8d, A86890 FF+8d, A86900 FF+8d | 18d |
| A86920 |  | Testing | 4d | 2026-11-23 | 2026-11-26 | A86910, A86910 FF | 18d |
| A86930 |  | Backfilling & Compaction | 16d | 2026-11-28 | 2026-12-15 | A86920, A86920 FF | 36d |
| A86940 |  | Chambers Construction works | 16d | 2026-11-28 | 2026-12-15 | A86920 | 18d |
| A86950 |  | Valves & Fittings Installation | 18d | 2027-01-02 | 2027-01-21 | A86940, A11180, A11020 | 4d |
|  | R15 | **Road 6** |  | 2026-08-18 | 2027-01-21 |  |  |
| A86970 |  | Road Crossing Works | 16d | 2026-08-18 | 2026-09-05 | A45390 | 2d |
| A86960 |  | Trenching & Bedding | 14d | 2026-08-20 | 2026-09-05 | A86970 SS, A86970 FF | 2d |
| A86980 |  | Pipe Laying | 18d | 2026-08-30 | 2026-09-19 | A86960 SS+8d, A86970 SS+8d, A86960 FF+8d, A86970 FF+8d | 2d |
| A86990 |  | Testing | 4d | 2026-09-20 | 2026-09-23 | A86980, A86980 FF | 2d |
| A87000 |  | Backfilling & Compaction | 16d | 2026-09-24 | 2026-10-12 | A86990, A86990 FF | 91d |
| A87010 |  | Chambers Construction works | 16d | 2026-09-24 | 2026-10-12 | A86990 | 2d |
| A87020 |  | Valves & Fittings Installation | 18d | 2027-01-02 | 2027-01-21 | A87010, A11180, A11020 | 4d |
|  | R16 | **Road 7** |  | 2026-10-21 | 2027-01-21 |  |  |
| A87040 |  | Road Crossing Works | 16d | 2026-10-21 | 2026-11-08 | A45990, A47100 | 15d |
| A87030 |  | Trenching & Bedding | 14d | 2026-10-24 | 2026-11-08 | A87040 SS, A87040 FF | 15d |
| A87050 |  | Pipe Laying | 18d | 2026-11-02 | 2026-11-22 | A87030 SS+8d, A87040 SS+8d, A87030 FF+8d, A87040 FF+8d | 18d |
| A87060 |  | Testing | 4d | 2026-11-23 | 2026-11-26 | A87050, A87050 FF | 18d |
| A87070 |  | Backfilling & Compaction | 16d | 2026-11-28 | 2026-12-15 | A87060, A87060 FF | 36d |
| A87080 |  | Chambers Construction works | 16d | 2026-11-28 | 2026-12-15 | A87060 | 18d |
| A87090 |  | Valves & Fittings Installation | 18d | 2027-01-02 | 2027-01-21 | A87080, A11180, A11020 | 4d |
|  | R17 | **Road 8** |  | 2026-10-21 | 2027-01-21 |  |  |
| A87110 |  | Road Crossing Works | 16d | 2026-10-21 | 2026-11-08 | A46590, A47100 | 2d |
| A87100 |  | Trenching & Bedding | 14d | 2026-10-24 | 2026-11-08 | A87110 SS, A87110 FF | 18d |
| A87120 |  | Pipe Laying | 18d | 2026-11-02 | 2026-11-22 | A87100 SS+8d, A87110 SS+8d, A87100 FF+8d, A87110 FF+8d | 18d |
| A87130 |  | Testing | 4d | 2026-11-23 | 2026-11-26 | A87120, A87120 FF | 18d |
| A87140 |  | Backfilling & Compaction | 16d | 2026-11-28 | 2026-12-15 | A87130, A87130 FF | 36d |
| A87150 |  | Chambers Construction works | 16d | 2026-11-28 | 2026-12-15 | A87130 | 18d |
| A87160 |  | Valves & Fittings Installation | 18d | 2027-01-02 | 2027-01-21 | A87150, A11180, A11020 | 4d |
|  | R18 | **Road 9** |  | 2026-11-09 | 2027-01-24 |  |  |
| A87180 |  | Road Crossing Works | 16d | 2026-11-09 | 2026-11-26 | A47090, A87110 | 2d |
| A87170 |  | Trenching & Bedding | 14d | 2026-11-11 | 2026-11-26 | A87180 SS, A87180 FF | 2d |
| A87190 |  | Pipe Laying | 18d | 2026-11-21 | 2026-12-10 | A87170 SS+8d, A87180 SS+8d, A87170 FF+8d, A87180 FF+8d | 2d |
| A87200 |  | Testing | 4d | 2026-12-12 | 2026-12-15 | A87190, A87190 FF | 2d |
| A87210 |  | Backfilling & Compaction | 16d | 2026-12-16 | 2027-01-03 | A87200, A87200 FF | 20d |
| A87220 |  | Chambers Construction works | 16d | 2026-12-16 | 2027-01-03 | A87200 | 2d |
| A87230 |  | Valves & Fittings Installation | 18d | 2027-01-04 | 2027-01-24 | A87220, A11180, A11020 | 2d |
|  | R19 | **Road 10** |  | 2026-11-29 | 2027-01-09 |  |  |
| A87240 |  | Trenching & Bedding | 10d | 2026-11-29 | 2026-12-09 | A87250 SS, A87250 FF | 15d |
| A87250 |  | Road Crossing Works | 10d | 2026-11-29 | 2026-12-09 | A47440 | 15d |
| A87260 |  | Pipe Laying | 10d | 2026-12-08 | 2026-12-19 | A87240 SS+8d, A87250 SS+8d, A87240 FF+8d, A87250 FF+8d | 15d |
| A87270 |  | Testing | 4d | 2026-12-20 | 2026-12-23 | A87260, A87260 FF | 15d |
| A87280 |  | Backfilling & Compaction | 7d | 2026-12-24 | 2026-12-31 | A87270, A87270 FF | 22d |
| A87290 |  | Chambers Construction works | 7d | 2026-12-24 | 2026-12-31 | A87270 | 15d |
| A87300 |  | Valves & Fittings Installation | 7d | 2027-01-02 | 2027-01-09 | A87290, A11180, A11020 | 15d |
|  | R110 | **Road 11** |  | 2026-12-03 | 2027-01-06 |  |  |
| A87310 |  | Trenching & Bedding | 5d | 2026-12-03 | 2026-12-08 | A87320 SS, A87320 FF | 19d |
| A87320 |  | Road Crossing Works | 5d | 2026-12-03 | 2026-12-08 | A47740 | 19d |
| A87330 |  | Pipe Laying | 5d | 2026-12-13 | 2026-12-17 | A87310 SS+8d, A87320 SS+8d, A87310 FF+8d, A87320 FF+8d | 19d |
| A87340 |  | Testing | 5d | 2026-12-19 | 2026-12-23 | A87330, A87330 FF | 19d |
| A87350 |  | Backfilling & Compaction | 5d | 2026-12-24 | 2026-12-29 | A87340, A87340 FF | 24d |
| A87360 |  | Chambers Construction works | 5d | 2026-12-24 | 2026-12-29 | A87340 | 19d |
| A87370 |  | Valves & Fittings Installation | 5d | 2027-01-02 | 2027-01-06 | A87360, A11180, A11020 | 17d |
|  | R111 | **Road 12** |  | 2026-12-15 | 2027-01-14 |  |  |
| A87380 |  | Trenching & Bedding | 3d | 2026-12-15 | 2026-12-17 | A87390 SS, A87390 FF | 10d |
| A87390 |  | Road Crossing Works | 3d | 2026-12-15 | 2026-12-17 | A48040 | 10d |
| A87400 |  | Pipe Laying | 5d | 2026-12-24 | 2026-12-29 | A87380 SS+8d, A87390 SS+8d, A87380 FF+8d, A87390 FF+8d | 10d |
| A87410 |  | Testing | 4d | 2026-12-30 | 2027-01-03 | A87400, A87400 FF | 10d |

| ID | WBS | Task | Duration | Start | Finish | Predecessors | Total float |
| --- | --- | --- | --- | --- | --- | --- | --- |
| A87420 |  | Backfilling & Compaction | 5d | 2027-01-04 | 2027-01-09 | A87410, A87410 FF | 15d |
| A87430 |  | Chambers Construction works | 5d | 2027-01-04 | 2027-01-09 | A87410 | 10d |
| A87440 |  | Valves & Fittings Installation | 5d | 2027-01-10 | 2027-01-14 | A87430, A11180, A11020 | 10d |
|  | R112 | **Road 13** |  | 2026-10-25 | 2027-01-21 |  |  |
| A87460 |  | Road Crossing Works | 16d | 2026-10-25 | 2026-11-11 | A48340, A48500 | 15d |
| A87450 |  | Trenching & Bedding | 14d | 2026-10-27 | 2026-11-11 | A87460 SS, A87460 FF | 15d |
| A87470 |  | Pipe Laying | 18d | 2026-11-05 | 2026-11-25 | A87450 SS+8d, A87460 SS+8d, A87450 FF+8d, A87460 FF+8d | 15d |
| A87480 |  | Testing | 4d | 2026-11-26 | 2026-11-30 | A87470, A87470 FF | 15d |
| A87490 |  | Backfilling & Compaction | 16d | 2026-12-01 | 2026-12-19 | A87480, A87480 FF | 33d |
| A87500 |  | Chambers Construction works | 16d | 2026-12-01 | 2026-12-19 | A87480 | 15d |
| A87510 |  | Valves & Fittings Installation | 18d | 2027-01-02 | 2027-01-21 | A87500, A11180, A11020 | 4d |
|  | R113 | **Road 14** |  | 2026-10-25 | 2027-01-21 |  |  |
| A87530 |  | Road Crossing Works | 16d | 2026-10-25 | 2026-11-11 | A48490, A48500 | 15d |
| A87520 |  | Trenching & Bedding | 14d | 2026-10-27 | 2026-11-11 | A87530 SS, A87530 FF | 15d |
| A87540 |  | Pipe Laying | 18d | 2026-11-05 | 2026-11-25 | A87520 SS+8d, A87530 SS+8d, A87520 FF+8d, A87530 FF+8d | 15d |
| A87550 |  | Testing | 4d | 2026-11-26 | 2026-11-30 | A87540, A87540 FF | 15d |
| A87560 |  | Backfilling & Compaction | 16d | 2026-12-01 | 2026-12-19 | A87550, A87550 FF | 33d |
| A87570 |  | Chambers Construction works | 16d | 2026-12-01 | 2026-12-19 | A87550 | 15d |
| A87580 |  | Valves & Fittings Installation | 18d | 2027-01-02 | 2027-01-21 | A87570, A11180, A11020 | 4d |
|  | R114 | **Road 15** |  | 2026-11-26 | 2026-12-23 |  |  |
| A87590 |  | Trenching & Bedding | 4d | 2026-11-26 | 2026-11-30 | A87600 SS, A87600 FF | 29d |
| A87600 |  | Road Crossing Works | 4d | 2026-11-26 | 2026-11-30 | A48740 | 29d |
| A87610 |  | Pipe Laying | 4d | 2026-12-06 | 2026-12-09 | A87590 SS+8d, A87600 SS+8d, A87590 FF+8d, A87600 FF+8d | 29d |
| A87620 |  | Testing | 4d | 2026-12-10 | 2026-12-14 | A87610, A87610 FF | 29d |
| A87630 |  | Backfilling & Compaction | 4d | 2026-12-15 | 2026-12-19 | A87620, A87620 FF | 33d |
| A87640 |  | Chambers Construction works | 4d | 2026-12-15 | 2026-12-19 | A87620 | 29d |
| A87650 |  | Valves & Fittings Installation | 4d | 2026-12-20 | 2026-12-23 | A87640, A11020 | 29d |
|  | R115 | **Road 16** |  | 2026-12-01 | 2026-12-28 |  |  |
| A87660 |  | Trenching & Bedding | 4d | 2026-12-01 | 2026-12-05 | A87670 SS, A87670 FF | 25d |
| A87670 |  | Road Crossing Works | 4d | 2026-12-01 | 2026-12-05 | A48790 | 25d |
| A87680 |  | Pipe Laying | 4d | 2026-12-10 | 2026-12-14 | A87660 SS+8d, A87670 SS+8d, A87660 FF+8d, A87670 FF+8d | 25d |
| A87690 |  | Testing | 4d | 2026-12-15 | 2026-12-19 | A87680, A87680 FF | 25d |
| A87700 |  | Backfilling & Compaction | 4d | 2026-12-20 | 2026-12-23 | A87690, A87690 FF | 29d |
| A87710 |  | Chambers Construction works | 4d | 2026-12-20 | 2026-12-23 | A87690 | 25d |
| A87720 |  | Valves & Fittings Installation | 4d | 2026-12-24 | 2026-12-28 | A87710, A11020 | 25d |
|  | R1171 | **Collector 1** |  | 2026-10-21 | 2026-12-27 |  |  |
| A87740 |  | Road Crossing Works | 11d | 2026-10-21 | 2026-11-02 | A48990, A47100 | 26d |
| A87730 |  | Trenching & Bedding | 10d | 2026-10-22 | 2026-11-02 | A87740 SS, A87740 FF | 26d |
| A87750 |  | Pipe Laying | 11d | 2026-11-01 | 2026-11-12 | A87730 SS+8d, A87740 SS+8d, A87730 FF+8d, A87740 FF+8d | 26d |
| A87760 |  | Testing | 4d | 2026-11-14 | 2026-11-17 | A87750, A87750 FF | 26d |
| A87770 |  | Backfilling & Compaction | 11d | 2026-11-18 | 2026-11-30 | A87760, A87760 FF | 49d |
| A87780 |  | Chambers Construction works | 16d | 2026-11-18 | 2026-12-06 | A87760 | 26d |
| A87790 |  | Valves & Fittings Installation | 18d | 2026-12-07 | 2026-12-27 | A87780, A11020 | 26d |
|  | IRRN | **IRRIGATION NETWORK** |  | 2026-10-13 | 2027-02-01 |  |  |
|  | R1 | **Road 1** |  | 2026-11-03 | 2026-12-02 |  |  |
| A88690 |  | Trench Excavation | 4d | 2026-11-03 | 2026-11-07 | A86610 SS, A1440, A1450, A1460, A1470, A1480, A10930, A11090, A86610 FF | 54d |
| A72005 |  | Pipe Laying | 6d | 2026-11-08 | 2026-11-14 | A88690 | 54d |
| A88640 |  | Road Crossing Works | 4d | 2026-11-15 | 2026-11-18 | A72005 | 62d |
| A88650 |  | Valve Chambers Civil Works | 6d | 2026-11-15 | 2026-11-21 | A72005 | 54d |
| A88660 |  | Valve Installation | 4d | 2026-11-22 | 2026-11-25 | A88650 | 54d |
| A88670 |  | Testing | 2d | 2026-11-26 | 2026-11-28 | A88660 | 54d |
| A88680 |  | Backfilling | 4d | 2026-11-29 | 2026-12-02 | A88670, A88640 | 54d |
|  | R11 | **Road 2** |  | 2026-11-04 | 2026-12-03 |  |  |
| A88760 |  | Trench Excavation | 4d | 2026-11-04 | 2026-11-08 | A86680 SS, A86680 FF | 53d |
| A88700 |  | Pipe Laying | 6d | 2026-11-09 | 2026-11-15 | A88760 | 53d |
| A88710 |  | Road Crossing Works | 4d | 2026-11-16 | 2026-11-19 | A88700 | 61d |
| A88720 |  | Valve Chambers Civil Works | 6d | 2026-11-16 | 2026-11-22 | A88700 | 53d |
| A88730 |  | Valve Installation | 4d | 2026-11-23 | 2026-11-26 | A88720 | 53d |
| A88740 |  | Testing | 2d | 2026-11-28 | 2026-11-29 | A88730 | 53d |
| A88750 |  | Backfilling | 4d | 2026-11-30 | 2026-12-03 | A88740, A88710 | 53d |
|  | R1111 | **Road 5** |  | 2026-11-08 | 2026-11-16 |  |  |
| A88900 |  | Trench Excavation | 1d | 2026-11-08 | 2026-11-08 | A86890 SS, A86890 FF | 68d |
| A88840 |  | Pipe Laying | 2d | 2026-11-09 | 2026-11-10 | A88900 | 68d |
| A88850 |  | Road Crossing Works | 1d | 2026-11-11 | 2026-11-11 | A88840 | 71d |
| A88860 |  | Valve Chambers Civil Works | 2d | 2026-11-11 | 2026-11-12 | A88840 | 68d |
| A88870 |  | Valve Installation | 1d | 2026-11-14 | 2026-11-14 | A88860 | 68d |
| A88880 |  | Testing | 1d | 2026-11-15 | 2026-11-15 | A88870 | 68d |
| A88890 |  | Backfilling | 1d | 2026-11-16 | 2026-11-16 | A88880, A88850 | 68d |
|  | R112 | **Road 3** |  | 2026-12-05 | 2027-01-18 |  |  |
| A88830 |  | Trench Excavation | 6d | 2026-12-05 | 2026-12-10 | A86750 SS, A86750 FF | 14d |

| ID | WBS | Task | Duration | Start | Finish | Predecessors | Total float |
| --- | --- | --- | --- | --- | --- | --- | --- |
| A88770 |  | Pipe Laying | 9d | 2026-12-12 | 2026-12-21 | A88830 | 14d |
| A88780 |  | Road Crossing Works | 6d | 2026-12-22 | 2026-12-28 | A88770 | 26d |
| A88790 |  | Valve Chambers Civil Works | 9d | 2026-12-22 | 2026-12-31 | A88770 | 14d |
| A88800 |  | Valve Installation | 6d | 2027-01-02 | 2027-01-07 | A88790 | 14d |
| A88810 |  | Testing | 3d | 2027-01-09 | 2027-01-11 | A88800 | 14d |
| A88820 |  | Backfilling | 6d | 2027-01-12 | 2027-01-18 | A88810, A88780 | 14d |
|  | R121 | **Road 4** |  | 2026-11-03 | 2026-11-11 |  |  |
| A89040 |  | Trench Excavation | 1d | 2026-11-03 | 2026-11-03 | A86820 SS, A86820 FF | 72d |
| A88980 |  | Pipe Laying | 2d | 2026-11-04 | 2026-11-05 | A89040 | 72d |
| A88990 |  | Road Crossing Works | 1d | 2026-11-07 | 2026-11-07 | A88980 | 75d |
| A89000 |  | Valve Chambers Civil Works | 2d | 2026-11-07 | 2026-11-08 | A88980 | 72d |
| A89010 |  | Valve Installation | 1d | 2026-11-09 | 2026-11-09 | A89000 | 72d |
| A89020 |  | Testing | 1d | 2026-11-10 | 2026-11-10 | A89010 | 72d |
| A89030 |  | Backfilling | 1d | 2026-11-11 | 2026-11-11 | A89020, A88990 | 72d |
|  | R1121 | **Road 7** |  | 2026-11-19 | 2026-12-26 |  |  |
| A89180 |  | Trench Excavation | 4d | 2026-11-19 | 2026-11-23 | A87030 SS, A87030 FF, A89100 | 2d |
| A89120 |  | Pipe Laying | 8d | 2026-11-24 | 2026-12-02 | A89180 | 2d |
| A89130 |  | Road Crossing Works | 4d | 2026-12-03 | 2026-12-07 | A89120 | 14d |
| A89140 |  | Valve Chambers Civil Works | 8d | 2026-12-03 | 2026-12-12 | A89120 | 2d |
| A89150 |  | Valve Installation | 4d | 2026-12-13 | 2026-12-16 | A89140 | 2d |
| A89160 |  | Testing | 4d | 2026-12-17 | 2026-12-21 | A89150 | 2d |
| A89170 |  | Backfilling | 4d | 2026-12-22 | 2026-12-26 | A89160, A89130 | 2d |
|  | R113 | **Road 6** |  | 2026-10-13 | 2026-11-18 |  |  |
| A89110 |  | Trench Excavation | 4d | 2026-10-13 | 2026-10-17 | A86960 SS, A86960 FF, A87010 | 2d |
| A89050 |  | Pipe Laying | 8d | 2026-10-18 | 2026-10-26 | A89110 | 2d |
| A89060 |  | Road Crossing Works | 4d | 2026-10-27 | 2026-10-31 | A89050 | 14d |
| A89070 |  | Valve Chambers Civil Works | 8d | 2026-10-27 | 2026-11-04 | A89050 | 2d |
| A89080 |  | Valve Installation | 4d | 2026-11-05 | 2026-11-09 | A89070 | 2d |
| A89090 |  | Testing | 4d | 2026-11-10 | 2026-11-14 | A89080 | 2d |
| A89100 |  | Backfilling | 4d | 2026-11-15 | 2026-11-18 | A89090, A89060 | 2d |
|  | R11111 | **Road 8** |  | 2026-12-27 | 2027-02-01 |  |  |
| A89250 |  | Trench Excavation | 4d | 2026-12-27 | 2026-12-30 | A87100 SS, A87100 FF, A89170 | 2d |
| A89190 |  | Pipe Laying | 8d | 2026-12-31 | 2027-01-09 | A89250 | 2d |
| A89200 |  | Road Crossing Works | 4d | 2027-01-10 | 2027-01-13 | A89190 | 14d |
| A89210 |  | Valve Chambers Civil Works | 8d | 2027-01-10 | 2027-01-18 | A89190 | 2d |
| A89220 |  | Valve Installation | 4d | 2027-01-19 | 2027-01-23 | A89210 | 2d |
| A89230 |  | Testing | 4d | 2027-01-24 | 2027-01-27 | A89220 | 2d |
| A89240 |  | Backfilling | 4d | 2027-01-28 | 2027-02-01 | A89230, A89200 | 2d |
|  | R13 | **Road 9** |  | 2026-11-26 | 2026-12-05 |  |  |
| A89320 |  | Trench Excavation | 1d | 2026-11-26 | 2026-11-26 | A87170 SS, A87170 FF | 52d |
| A89260 |  | Pipe Laying | 2d | 2026-11-28 | 2026-11-29 | A89320 | 52d |
| A89270 |  | Road Crossing Works | 1d | 2026-11-30 | 2026-11-30 | A89260 | 55d |
| A89280 |  | Valve Chambers Civil Works | 2d | 2026-11-30 | 2026-12-01 | A89260 | 52d |
| A89290 |  | Valve Installation | 1d | 2026-12-02 | 2026-12-02 | A89280 | 52d |
| A89300 |  | Testing | 1d | 2026-12-03 | 2026-12-03 | A89290 | 52d |
| A89310 |  | Backfilling | 1d | 2026-12-05 | 2026-12-05 | A89300, A89270 | 52d |
|  | R12 | **Road 10** |  | 2026-12-09 | 2026-12-17 |  |  |
| A89390 |  | Trench Excavation | 1d | 2026-12-09 | 2026-12-09 | A87240 SS, A87240 FF | 41d |
| A89330 |  | Pipe Laying | 2d | 2026-12-10 | 2026-12-12 | A89390 | 41d |
| A89340 |  | Road Crossing Works | 1d | 2026-12-13 | 2026-12-13 | A89330 | 44d |
| A89350 |  | Valve Chambers Civil Works | 2d | 2026-12-13 | 2026-12-14 | A89330 | 41d |
| A89360 |  | Valve Installation | 1d | 2026-12-15 | 2026-12-15 | A89350 | 41d |
| A89370 |  | Testing | 1d | 2026-12-16 | 2026-12-16 | A89360 | 41d |
| A89380 |  | Backfilling | 1d | 2026-12-17 | 2026-12-17 | A89370, A89340 | 41d |
|  | R111 | **Road 11** |  | 2026-12-08 | 2026-12-16 |  |  |
| A89460 |  | Trench Excavation | 1d | 2026-12-08 | 2026-12-08 | A87310 SS, A87310 FF | 42d |
| A89400 |  | Pipe Laying | 2d | 2026-12-09 | 2026-12-10 | A89460 | 42d |
| A89410 |  | Road Crossing Works | 1d | 2026-12-12 | 2026-12-12 | A89400 | 45d |
| A89420 |  | Valve Chambers Civil Works | 2d | 2026-12-12 | 2026-12-13 | A89400 | 42d |
| A89430 |  | Valve Installation | 1d | 2026-12-14 | 2026-12-14 | A89420 | 42d |
| A89440 |  | Testing | 1d | 2026-12-15 | 2026-12-15 | A89430 | 42d |
| A89450 |  | Backfilling | 1d | 2026-12-16 | 2026-12-16 | A89440, A89410 | 42d |
|  | R1112 | **Road 12** |  | 2026-12-17 | 2026-12-26 |  |  |
| A89530 |  | Trench Excavation | 1d | 2026-12-17 | 2026-12-17 | A87380 SS, A87380 FF | 34d |
| A89470 |  | Pipe Laying | 2d | 2026-12-19 | 2026-12-20 | A89530 | 34d |
| A89480 |  | Road Crossing Works | 1d | 2026-12-21 | 2026-12-21 | A89470 | 37d |
| A89490 |  | Valve Chambers Civil Works | 2d | 2026-12-21 | 2026-12-22 | A89470 | 34d |
| A89500 |  | Valve Installation | 1d | 2026-12-23 | 2026-12-23 | A89490 | 34d |
| A89510 |  | Testing | 1d | 2026-12-24 | 2026-12-24 | A89500 | 34d |
| A89520 |  | Backfilling | 1d | 2026-12-26 | 2026-12-26 | A89510, A89480 | 34d |

| ID | WBS | Task | Duration | Start | Finish | Predecessors | Total float |
| --- | --- | --- | --- | --- | --- | --- | --- |
|  | R122 | **Road 13** |  | 2026-11-11 | 2026-11-19 |  |  |
| A89600 |  | Trench Excavation | 1d | 2026-11-11 | 2026-11-11 | A87450 SS, A87450 FF | 65d |
| A89540 |  | Pipe Laying | 2d | 2026-11-12 | 2026-11-14 | A89600 | 65d |
| A89550 |  | Road Crossing Works | 1d | 2026-11-15 | 2026-11-15 | A89540 | 68d |
| A89560 |  | Valve Chambers Civil Works | 2d | 2026-11-15 | 2026-11-16 | A89540 | 65d |
| A89570 |  | Valve Installation | 1d | 2026-11-17 | 2026-11-17 | A89560 | 65d |
| A89580 |  | Testing | 1d | 2026-11-18 | 2026-11-18 | A89570 | 65d |
| A89590 |  | Backfilling | 1d | 2026-11-19 | 2026-11-19 | A89580, A89550 | 65d |
|  | R111111 | **Road 14** |  | 2026-11-11 | 2026-11-19 |  |  |
| A89670 |  | Trench Excavation | 1d | 2026-11-11 | 2026-11-11 | A87520 SS, A87520 FF | 65d |
| A89610 |  | Pipe Laying | 2d | 2026-11-12 | 2026-11-14 | A89670 | 65d |
| A89620 |  | Road Crossing Works | 1d | 2026-11-15 | 2026-11-15 | A89610 | 68d |
| A89630 |  | Valve Chambers Civil Works | 2d | 2026-11-15 | 2026-11-16 | A89610 | 65d |
| A89640 |  | Valve Installation | 1d | 2026-11-17 | 2026-11-17 | A89630 | 65d |
| A89650 |  | Testing | 1d | 2026-11-18 | 2026-11-18 | A89640 | 65d |
| A89660 |  | Backfilling | 1d | 2026-11-19 | 2026-11-19 | A89650, A89620 | 65d |
|  | R131 | **Road 15** |  | 2026-11-30 | 2026-12-08 |  |  |
| A89740 |  | Trench Excavation | 1d | 2026-11-30 | 2026-11-30 | A87590 SS, A87590 FF | 49d |
| A89680 |  | Pipe Laying | 2d | 2026-12-01 | 2026-12-02 | A89740 | 49d |
| A89690 |  | Road Crossing Works | 1d | 2026-12-03 | 2026-12-03 | A89680 | 52d |
| A89700 |  | Valve Chambers Civil Works | 2d | 2026-12-03 | 2026-12-05 | A89680 | 49d |
| A89710 |  | Valve Installation | 1d | 2026-12-06 | 2026-12-06 | A89700 | 49d |
| A89720 |  | Testing | 1d | 2026-12-07 | 2026-12-07 | A89710 | 49d |
| A89730 |  | Backfilling | 1d | 2026-12-08 | 2026-12-08 | A89720, A89690 | 49d |
|  | R11211 | **Road 16** |  | 2026-12-05 | 2026-12-13 |  |  |
| A89810 |  | Trench Excavation | 1d | 2026-12-05 | 2026-12-05 | A87660 SS, A87660 FF | 44d |
| A89750 |  | Pipe Laying | 2d | 2026-12-06 | 2026-12-07 | A89810 | 45d |
| A89760 |  | Road Crossing Works | 1d | 2026-12-08 | 2026-12-08 | A89750 | 48d |
| A89770 |  | Valve Chambers Civil Works | 2d | 2026-12-08 | 2026-12-09 | A89750 | 45d |
| A89780 |  | Valve Installation | 1d | 2026-12-10 | 2026-12-10 | A89770 | 45d |
| A89790 |  | Testing | 1d | 2026-12-12 | 2026-12-12 | A89780 | 45d |
| A89800 |  | Backfilling | 1d | 2026-12-13 | 2026-12-13 | A89790, A89760 | 45d |
|  | R1131 | **Road 17** |  | 2026-12-06 | 2026-12-14 |  |  |
| A89880 |  | Trench Excavation | 1d | 2026-12-06 | 2026-12-06 | A89810 | 44d |
| A89820 |  | Pipe Laying | 2d | 2026-12-07 | 2026-12-08 | A89880 | 44d |
| A89830 |  | Road Crossing Works | 1d | 2026-12-09 | 2026-12-09 | A89820 | 47d |
| A89840 |  | Valve Chambers Civil Works | 2d | 2026-12-09 | 2026-12-10 | A89820 | 44d |
| A89850 |  | Valve Installation | 1d | 2026-12-12 | 2026-12-12 | A89840 | 44d |
| A89860 |  | Testing | 1d | 2026-12-13 | 2026-12-13 | A89850 | 44d |
| A89870 |  | Backfilling | 1d | 2026-12-14 | 2026-12-14 | A89860, A89830 | 44d |
|  | R11112 | **Collector 1** |  | 2026-10-29 | 2026-11-28 |  |  |
| A88970 |  | Trench Excavation | 4d | 2026-10-29 | 2026-11-02 | A87730 SS, A87730 FF | 58d |
| A88910 |  | Pipe Laying | 6d | 2026-11-03 | 2026-11-09 | A88970 | 58d |
| A88920 |  | Road Crossing Works | 4d | 2026-11-10 | 2026-11-14 | A88910 | 66d |
| A88930 |  | Valve Chambers Civil Works | 6d | 2026-11-10 | 2026-11-16 | A88910 | 58d |
| A88940 |  | Valve Installation | 4d | 2026-11-17 | 2026-11-21 | A88930 | 58d |
| A88950 |  | Testing | 2d | 2026-11-22 | 2026-11-23 | A88940 | 58d |
| A88960 |  | Backfilling | 4d | 2026-11-24 | 2026-11-28 | A88950, A88920 | 58d |
|  | MVN | **MV NETWORK** |  | 2026-06-09 | 2026-09-14 |  |  |
|  | 8 | **PSS 9067 - loop 01 Zone A** |  | 2026-06-09 | 2026-09-14 |  |  |
| A84010 |  | Trenching & excavation | 8d | 2026-06-09 | 2026-06-17 | A1540, A1550, A1560, A1570, A1580, A10770 | 17d |
| A84020 |  | Bedding preparation (sand) | 12d | 2026-06-14 | 2026-06-27 | A84010 SS+4d | 43d |
| A84030 |  | Duct installation / concrete encasement | 21d | 2026-06-18 | 2026-07-12 | A84020 SS+4d, A84020 FF+4d | 43d |
| A84050 |  | Cable Laying | 21d | 2026-08-01 | 2026-08-24 | A84030 SS+4d, A84030 FF+4d, A10720 | 10d |
| A84040 |  | Backfilling & compaction | 21d | 2026-08-05 | 2026-08-29 | A84050 SS+4d, A84050 FF+4d | 10d |
| A84070 |  | RMU / transformer installation | 10d | 2026-08-30 | 2026-09-09 | A84040, A10710 | 10d |
| A84060 |  | Testing | 4d | 2026-09-10 | 2026-09-14 | A84070 | 10d |
|  | 2 | **PSS 9067 - loop 02 Zone A** |  | 2026-06-18 | 2026-09-14 |  |  |
| A84080 |  | Trenching & excavation | 8d | 2026-06-18 | 2026-06-27 | A84010 | 17d |
| A84090 |  | Bedding preparation (sand) | 8d | 2026-06-23 | 2026-07-01 | A84080 SS+4d | 35d |
| A84100 |  | Duct installation / concrete encasement | 21d | 2026-06-28 | 2026-07-21 | A84090 SS+4d, A84090 FF+4d | 35d |
| A84120 |  | Cable Laying | 21d | 2026-08-01 | 2026-08-24 | A84100 SS+4d, A84100 FF+4d, A10720 | 10d |
| A84110 |  | Backfilling & compaction | 21d | 2026-08-05 | 2026-08-29 | A84120 SS+4d, A84120 FF+4d | 10d |
| A84140 |  | RMU / transformer installation | 10d | 2026-08-30 | 2026-09-09 | A84110, A10710 | 10d |
| A84130 |  | Testing | 4d | 2026-09-10 | 2026-09-14 | A84140 | 10d |
|  | 3 | **PSS 9067 - loop 03 Zone A** |  | 2026-06-28 | 2026-09-13 |  |  |
| A84150 |  | Trenching & excavation | 8d | 2026-06-28 | 2026-07-06 | A84080 | 17d |
| A84160 |  | Bedding preparation (sand) | 12d | 2026-07-01 | 2026-07-14 | A84150 SS+3d, A84150 FF+3d | 17d |
| A84170 |  | Duct installation / concrete encasement | 17d | 2026-07-05 | 2026-07-23 | A84160 SS+3d, A84160 FF+3d | 17d |
| A84190 |  | Cable Laying | 17d | 2026-08-01 | 2026-08-19 | A84170, A10720 | 11d |

| ID | WBS | Task | Duration | Start | Finish | Predecessors | Total float |
| --- | --- | --- | --- | --- | --- | --- | --- |
| A84180 |  | Backfilling & compaction | 21d | 2026-08-04 | 2026-08-27 | A84190 SS+3d, A84190 FF+3d | 11d |
| A84210 |  | RMU / transformer installation | 10d | 2026-08-29 | 2026-09-08 | A84180, A10710 | 11d |
| A84200 |  | Testing | 4d | 2026-09-09 | 2026-09-13 | A84210 | 11d |
|  | ROL | **ROAD LIGHING** |  | 2027-06-23 | 2027-11-17 |  |  |
|  | 2 | **PSS 9067 - loop 02 Zone A** |  | 2027-06-23 | 2027-11-17 |  |  |
| A84220 |  | Trenching for lighting network | 10d | 2027-06-23 | 2027-07-04 | A84110, A10260 SS+15d, A10260 FF+15d, A56740 | 25d |
| A84250 |  | LV cable laying & termination / Backfilling | 10d | 2027-07-11 | 2027-07-21 | A84220 SS+6d, A10730, A10740, A10760 | 36d |
| A84260 |  | Street lighting sub-station construction & installation | 14d | 2027-07-22 | 2027-08-07 | A84250, A10750 | 36d |
| A84240 |  | Installation of lighting poles foundations | 12d | 2027-08-26 | 2027-09-08 | A84250 SS+6d, A10810 | 57d |
| A84230 |  | Installation of lighting poles & luminaires | 12d | 2027-11-04 | 2027-11-17 | A84240 SS+6d, A84240 FF+6d, A10800, A10810 | 3d |
|  | 8 | **PSS 9067 - loop 01 Zone A** |  | 2027-07-05 | 2027-11-17 |  |  |
| A84270 |  | Trenching for lighting network | 10d | 2027-07-05 | 2027-07-15 | A84040, A4900, A4910, A4920, A4930, A4940, A84220 | 25d |
| A84300 |  | LV cable laying & termination / Backfilling | 10d | 2027-07-12 | 2027-07-22 | A84270 SS+6d, A10730, A10740, A10760 | 35d |
| A84310 |  | Street lighting sub-station construction & installation | 14d | 2027-07-24 | 2027-08-08 | A84300, A10750 | 35d |
| A84290 |  | Installation of lighting poles foundations | 12d | 2027-08-26 | 2027-09-08 | A84300 SS+6d, A10810 | 57d |
| A84280 |  | Installation of lighting poles & luminaires | 12d | 2027-11-04 | 2027-11-17 | A84290 SS+6d, A84290 FF+6d, A10800, A10810 | 3d |
|  | 3 | **PSS 9067 - loop 03 Zone A** |  | 2027-07-17 | 2027-11-17 |  |  |
| A84320 |  | Trenching for lighting network | 10d | 2027-07-17 | 2027-07-27 | A84180, A84270 | 25d |
| A84350 |  | LV cable laying & termination / Backfilling | 10d | 2027-07-24 | 2027-08-03 | A84320 SS+6d, A84320 FF+6d, A10730, A10740, A10760 | 25d |
| A84360 |  | Street lighting sub-station construction & installation | 14d | 2027-08-04 | 2027-08-19 | A84350, A10750 | 25d |
| A84340 |  | Installation of lighting poles foundations | 12d | 2027-08-26 | 2027-09-08 | A84350 SS+6d, A10810 | 57d |
| A84330 |  | Installation of lighting poles & luminaires | 12d | 2027-11-04 | 2027-11-17 | A84340 SS+6d, A84340 FF+6d, A10800, A10810 | 3d |
|  | COM | **TELECOMMUNICATION** |  | 2026-09-24 | 2027-01-24 |  |  |
|  | R1 | **Road 1** |  | 2026-09-24 | 2027-01-24 |  |  |
| A90940 |  | Excavation | 10d | 2026-09-24 | 2026-10-05 | A5000, A5010, A5020, A5030, A5040, A58910 | 64d |
| A90950 |  | Duct Jointing & Laying | 10d | 2026-10-06 | 2026-10-17 | A90940 | 64d |
| A90960 |  | Road Crossing Encasement | 10d | 2026-10-18 | 2026-10-28 | A90950 | 64d |
| A90970 |  | Manhole Civil Works | 10d | 2027-01-02 | 2027-01-12 | A90960, A10250, A11110 | 9d |
| A90980 |  | Backfilling & Compaction | 10d | 2027-01-13 | 2027-01-24 | A90970 | 9d |
|  | R2 | **Road 2** |  | 2026-09-24 | 2027-01-17 |  |  |
| A90990 |  | Excavation | 10d | 2026-09-24 | 2026-10-05 | A58910 | 70d |
| A91000 |  | Duct Jointing & Laying | 10d | 2026-10-06 | 2026-10-17 | A90990 | 70d |
| A91010 |  | Road Crossing Encasement | 10d | 2026-10-18 | 2026-10-28 | A91000 | 70d |
| A91020 |  | Manhole Civil Works | 4d | 2027-01-02 | 2027-01-05 | A91010, A10250, A11110 | 15d |
| A91030 |  | Backfilling & Compaction | 10d | 2027-01-06 | 2027-01-17 | A91020 | 15d |
|  | R3 | **Road 3** |  | 2026-09-24 | 2027-01-17 |  |  |
| A91040 |  | Excavation | 10d | 2026-09-24 | 2026-10-05 | A58910 | 70d |
| A91050 |  | Duct Jointing & Laying | 10d | 2026-10-06 | 2026-10-17 | A91040 | 70d |
| A91060 |  | Road Crossing Encasement | 10d | 2026-10-18 | 2026-10-28 | A91050 | 70d |
| A91070 |  | Manhole Civil Works | 4d | 2027-01-02 | 2027-01-05 | A91060, A10250, A11110 | 15d |
| A91080 |  | Backfilling & Compaction | 10d | 2027-01-06 | 2027-01-17 | A91070 | 15d |
|  | R4 | **Road 4** |  | 2026-09-24 | 2027-01-17 |  |  |
| A91090 |  | Excavation | 10d | 2026-09-24 | 2026-10-05 | A58910 | 70d |
| A91100 |  | Duct Jointing & Laying | 10d | 2026-10-06 | 2026-10-17 | A91090 | 70d |
| A91110 |  | Road Crossing Encasement | 10d | 2026-10-18 | 2026-10-28 | A91100 | 70d |
| A91120 |  | Manhole Civil Works | 4d | 2027-01-02 | 2027-01-05 | A91110, A10250, A11110 | 15d |
| A91130 |  | Backfilling & Compaction | 10d | 2027-01-06 | 2027-01-17 | A91120 | 15d |
|  | R5 | **Road 5** |  | 2026-09-24 | 2027-01-17 |  |  |
| A91140 |  | Excavation | 10d | 2026-09-24 | 2026-10-05 | A58910 | 70d |
| A91150 |  | Duct Jointing & Laying | 10d | 2026-10-06 | 2026-10-17 | A91140 | 70d |
| A91160 |  | Road Crossing Encasement | 10d | 2026-10-18 | 2026-10-28 | A91150 | 70d |
| A91170 |  | Manhole Civil Works | 4d | 2027-01-02 | 2027-01-05 | A91160, A10250, A11110 | 15d |
| A91180 |  | Backfilling & Compaction | 10d | 2027-01-06 | 2027-01-17 | A91170 | 15d |
|  | R6 | **Road 6** |  | 2026-09-24 | 2027-01-17 |  |  |
| A91190 |  | Excavation | 10d | 2026-09-24 | 2026-10-05 | A58910 | 70d |
| A91200 |  | Duct Jointing & Laying | 10d | 2026-10-06 | 2026-10-17 | A91190 | 70d |
| A91210 |  | Road Crossing Encasement | 10d | 2026-10-18 | 2026-10-28 | A91200 | 70d |
| A91220 |  | Manhole Civil Works | 4d | 2027-01-02 | 2027-01-05 | A91210, A10250, A11110 | 15d |
| A91230 |  | Backfilling & Compaction | 10d | 2027-01-06 | 2027-01-17 | A91220 | 15d |
|  | R7 | **Road 7** |  | 2026-09-24 | 2027-01-17 |  |  |
| A91240 |  | Excavation | 10d | 2026-09-24 | 2026-10-05 | A58910 | 70d |
| A91250 |  | Duct Jointing & Laying | 10d | 2026-10-06 | 2026-10-17 | A91240 | 70d |
| A91260 |  | Road Crossing Encasement | 10d | 2026-10-18 | 2026-10-28 | A91250 | 70d |
| A91270 |  | Manhole Civil Works | 4d | 2027-01-02 | 2027-01-05 | A91260, A10250, A11110 | 15d |
| A91280 |  | Backfilling & Compaction | 10d | 2027-01-06 | 2027-01-17 | A91270 | 15d |
|  | R8 | **Road 8** |  | 2026-09-24 | 2027-01-17 |  |  |
| A91290 |  | Excavation | 10d | 2026-09-24 | 2026-10-05 | A58910 | 70d |
| A91300 |  | Duct Jointing & Laying | 10d | 2026-10-06 | 2026-10-17 | A91290 | 70d |
| A91310 |  | Road Crossing Encasement | 10d | 2026-10-18 | 2026-10-28 | A91300 | 70d |
| A91320 |  | Manhole Civil Works | 4d | 2027-01-02 | 2027-01-05 | A91310, A10250, A11110 | 15d |

| ID | WBS | Task | Duration | Start | Finish | Predecessors | Total float |
| --- | --- | --- | --- | --- | --- | --- | --- |
| A91330 |  | Backfilling & Compaction | 10d | 2027-01-06 | 2027-01-17 | A91320 | 15d |
|  | R9 | **Road 9** |  | 2026-09-24 | 2027-01-17 |  |  |
| A91340 |  | Excavation | 10d | 2026-09-24 | 2026-10-05 | A58910 | 70d |
| A91350 |  | Duct Jointing & Laying | 10d | 2026-10-06 | 2026-10-17 | A91340 | 70d |
| A91360 |  | Road Crossing Encasement | 10d | 2026-10-18 | 2026-10-28 | A91350 | 70d |
| A91370 |  | Manhole Civil Works | 4d | 2027-01-02 | 2027-01-05 | A91360, A10250, A11110 | 15d |
| A91380 |  | Backfilling & Compaction | 10d | 2027-01-06 | 2027-01-17 | A91370 | 15d |
|  | R10 | **Road 10** |  | 2026-09-24 | 2027-01-17 |  |  |
| A91390 |  | Excavation | 10d | 2026-09-24 | 2026-10-05 | A58910 | 70d |
| A91400 |  | Duct Jointing & Laying | 10d | 2026-10-06 | 2026-10-17 | A91390 | 70d |
| A91410 |  | Road Crossing Encasement | 10d | 2026-10-18 | 2026-10-28 | A91400 | 70d |
| A91420 |  | Manhole Civil Works | 10d | 2027-01-02 | 2027-01-12 | A91410, A10250, A11110 | 15d |
| A91430 |  | Backfilling & Compaction | 4d | 2027-01-13 | 2027-01-17 | A91420 | 15d |
|  | R11 | **Road 11** |  | 2026-09-24 | 2027-01-17 |  |  |
| A91440 |  | Excavation | 10d | 2026-09-24 | 2026-10-05 | A58910 | 70d |
| A91450 |  | Duct Jointing & Laying | 10d | 2026-10-06 | 2026-10-17 | A91440 | 70d |
| A91460 |  | Road Crossing Encasement | 10d | 2026-10-18 | 2026-10-28 | A91450 | 70d |
| A91470 |  | Manhole Civil Works | 10d | 2027-01-02 | 2027-01-12 | A91460, A10250, A11110 | 15d |
| A91480 |  | Backfilling & Compaction | 4d | 2027-01-13 | 2027-01-17 | A91470 | 15d |
|  | R12 | **Road 12** |  | 2026-09-24 | 2027-01-17 |  |  |
| A91490 |  | Excavation | 10d | 2026-09-24 | 2026-10-05 | A58910 | 70d |
| A91500 |  | Duct Jointing & Laying | 10d | 2026-10-06 | 2026-10-17 | A91490 | 70d |
| A91510 |  | Road Crossing Encasement | 10d | 2026-10-18 | 2026-10-28 | A91500 | 70d |
| A91520 |  | Manhole Civil Works | 10d | 2027-01-02 | 2027-01-12 | A91510, A10250, A11110 | 15d |
| A91530 |  | Backfilling & Compaction | 4d | 2027-01-13 | 2027-01-17 | A91520 | 15d |
|  | R13 | **Road 13** |  | 2026-09-24 | 2027-01-17 |  |  |
| A91540 |  | Excavation | 10d | 2026-09-24 | 2026-10-05 | A58910 | 70d |
| A91550 |  | Duct Jointing & Laying | 10d | 2026-10-06 | 2026-10-17 | A91540 | 70d |
| A91560 |  | Road Crossing Encasement | 10d | 2026-10-18 | 2026-10-28 | A91550 | 70d |
| A91570 |  | Manhole Civil Works | 10d | 2027-01-02 | 2027-01-12 | A91560, A10250, A11110 | 15d |
| A91580 |  | Backfilling & Compaction | 4d | 2027-01-13 | 2027-01-17 | A91570 | 15d |
|  | R14 | **Road 14** |  | 2026-09-24 | 2027-01-17 |  |  |
| A91590 |  | Excavation | 10d | 2026-09-24 | 2026-10-05 | A58910 | 70d |
| A91600 |  | Duct Jointing & Laying | 10d | 2026-10-06 | 2026-10-17 | A91590 | 70d |
| A91610 |  | Road Crossing Encasement | 10d | 2026-10-18 | 2026-10-28 | A91600 | 70d |
| A91620 |  | Manhole Civil Works | 10d | 2027-01-02 | 2027-01-12 | A91610, A10250, A11110 | 15d |
| A91630 |  | Backfilling & Compaction | 4d | 2027-01-13 | 2027-01-17 | A91620 | 15d |
|  | R15 | **Road 15** |  | 2026-09-24 | 2027-01-17 |  |  |
| A91640 |  | Excavation | 10d | 2026-09-24 | 2026-10-05 | A58910 | 70d |
| A91650 |  | Duct Jointing & Laying | 10d | 2026-10-06 | 2026-10-17 | A91640 | 70d |
| A91660 |  | Road Crossing Encasement | 10d | 2026-10-18 | 2026-10-28 | A91650 | 70d |
| A91670 |  | Manhole Civil Works | 10d | 2027-01-02 | 2027-01-12 | A91660, A10250, A11110 | 15d |
| A91680 |  | Backfilling & Compaction | 4d | 2027-01-13 | 2027-01-17 | A91670 | 15d |
|  | R16 | **Road 16** |  | 2026-09-24 | 2027-01-17 |  |  |
| A91690 |  | Excavation | 10d | 2026-09-24 | 2026-10-05 | A58910 | 70d |
| A91700 |  | Duct Jointing & Laying | 10d | 2026-10-06 | 2026-10-17 | A91690 | 70d |
| A91710 |  | Road Crossing Encasement | 10d | 2026-10-18 | 2026-10-28 | A91700 | 70d |
| A91720 |  | Manhole Civil Works | 10d | 2027-01-02 | 2027-01-12 | A91710, A10250, A11110 | 15d |
| A91730 |  | Backfilling & Compaction | 4d | 2027-01-13 | 2027-01-17 | A91720 | 15d |
|  | R17 | **Road 17** |  | 2026-09-24 | 2027-01-17 |  |  |
| A91740 |  | Excavation | 10d | 2026-09-24 | 2026-10-05 | A58910 | 70d |
| A91750 |  | Duct Jointing & Laying | 10d | 2026-10-06 | 2026-10-17 | A91740 | 70d |
| A91760 |  | Road Crossing Encasement | 10d | 2026-10-18 | 2026-10-28 | A91750 | 70d |
| A91770 |  | Manhole Civil Works | 10d | 2027-01-02 | 2027-01-12 | A91760, A10250, A11110 | 15d |
| A91780 |  | Backfilling & Compaction | 4d | 2027-01-13 | 2027-01-17 | A91770 | 15d |
|  | CO1 | **COLLECTOR 1** |  | 2026-09-24 | 2027-01-17 |  |  |
| A91790 |  | Excavation | 10d | 2026-09-24 | 2026-10-05 | A58910 | 70d |
| A91800 |  | Duct Jointing & Laying | 10d | 2026-10-06 | 2026-10-17 | A91790 | 70d |
| A91810 |  | Road Crossing Encasement | 10d | 2026-10-18 | 2026-10-28 | A91800 | 70d |
| A91820 |  | Manhole Civil Works | 4d | 2027-01-02 | 2027-01-05 | A91810, A10250, A11110 | 15d |
| A91830 |  | Backfilling & Compaction | 10d | 2027-01-06 | 2027-01-17 | A91820 | 15d |
|  | RW | **ROADS WORK** |  | 2026-04-18 | 2027-08-05 |  |  |
|  | 1 | **Road 1** |  | 2026-04-18 | 2027-07-08 |  |  |
|  | AGG | **Aggregate Base Course** |  | 2026-04-18 | 2026-04-26 |  |  |
| A56660 |  | Aggregate base course | 8d | 2026-04-18 | 2026-04-26 | A56620, A1650, A1660, A1670, A1680, A1690, A1700, A10280, A10290 SS+5d, A10300, A10290 FF+5d | 0d |
|  | BIT | **Bituminous Construction** |  | 2026-04-27 | 2026-04-29 |  |  |
| A56670 |  | Bituminous base course (Grading I - Class A) | 3d | 2026-04-27 | 2026-04-29 | A56660 | 133d |
|  | ASP | **Asphalt Wearing Course** |  | 2027-02-28 | 2027-03-13 |  |  |
| A56680 |  | Bituminous concrete wearing course | 12d | 2027-02-28 | 2027-03-13 | A56670, A88420, A11230 SS, A4825 | 1d |
|  | CON | **Precast Concrete Curb** |  | 2027-05-26 | 2027-06-14 |  |  |

| ID | WBS | Task | Duration | Start | Finish | Predecessors | Total float |
| --- | --- | --- | --- | --- | --- | --- | --- |
| A56690 |  | Concrete curb, Type (K1A) | 8d | 2027-05-26 | 2027-06-03 | A56660, A56680, A10270 | 25d |
| A56700 |  | Concrete curb, Type (K1B) | 5d | 2027-06-05 | 2027-06-09 | A56690, A10270 | 25d |
| A56710 |  | Concrete curb, Type (K2) | 4d | 2027-06-10 | 2027-06-14 | A56700, A10270 | 25d |
|  | PAV | **Pavement Markings** |  | 2027-06-15 | 2027-06-19 |  |  |
| A56720 |  | Retroreflective Thermoplastic White Traffic lines | 2d | 2027-06-15 | 2027-06-16 | A56710, A56680 | 25d |
| A56730 |  | Retroreflective Thermoplastic Yellow Traffic lines | 2d | 2027-06-17 | 2027-06-19 | A56720 | 25d |
|  | TRS | **Traffic Signage** |  | 2027-06-20 | 2027-07-08 |  |  |
| A56740 |  | Traffic signs, ground mounted, 1 Sheet Alumenium, (breakaway) Single post | 3d | 2027-06-20 | 2027-06-22 | A56730 | 25d |
| A56750 |  | Traffic signs, ground mounted, 2 Sheet Alumenium, (breakaway) Single post | 2d | 2027-06-23 | 2027-06-24 | A56740 | 92d |
| A56760 |  | Traffic signs, ground mounted, Sheet Alumenium, (breakaway) Double post | 4d | 2027-06-26 | 2027-06-29 | A56750 | 92d |
| A56770 |  | Retroreflective raised pavement markers (Type A) | 3d | 2027-06-30 | 2027-07-03 | A56760 | 107d |
| A56780 |  | Ceramic raised pavement markers | 3d | 2027-07-04 | 2027-07-06 | A56770 | 107d |
| A56790 |  | Solar powered lighting cateyes pavement markers | 2d | 2027-07-07 | 2027-07-08 | A56780 | 126d |
|  | 2 | **Road 2** |  | 2026-04-27 | 2027-06-08 |  |  |
|  | AGG | **Aggregate Base Course** |  | 2026-04-27 | 2026-05-05 |  |  |
| A62580 |  | Aggregate base course | 8d | 2026-04-27 | 2026-05-05 | A59220, A56660 | 0d |
|  | BIT | **Bituminous Construction** |  | 2026-05-06 | 2026-05-09 |  |  |
| A62590 |  | Bituminous base course (Grading I - Class A) | 3d | 2026-05-06 | 2026-05-09 | A62580 | 125d |
|  | ASP | **Asphalt Wearing Course** |  | 2027-03-14 | 2027-03-30 |  |  |
| A62600 |  | Bituminous concrete wearing course | 15d | 2027-03-14 | 2027-03-30 | A62590, A56680 | 65d |
|  | CON | **Precast Concrete Curb** |  | 2027-05-26 | 2027-06-06 |  |  |
| A62610 |  | Concrete curb, Type (K1A) | 3d | 2027-05-26 | 2027-05-29 | A62580, A62600, A10270 | 152d |
| A62620 |  | Concrete curb, Type (K1B) | 3d | 2027-05-30 | 2027-06-01 | A62610, A10270 | 152d |
| A62630 |  | Concrete curb, Type (K2) | 4d | 2027-06-02 | 2027-06-06 | A62620, A10270 | 152d |
|  | PAV | **Pavement Markings** |  | 2027-03-31 | 2027-04-04 |  |  |
| A62640 |  | Retroreflective Thermoplastic White Traffic lines | 2d | 2027-03-31 | 2027-04-01 | A62600 | 156d |
| A62650 |  | Retroreflective Thermoplastic Yellow Traffic lines | 2d | 2027-04-03 | 2027-04-04 | A62640 | 156d |
|  | TRS | **Traffic Signage** |  | 2027-04-05 | 2027-06-08 |  |  |
| A62660 |  | Traffic signs, ground mounted, 1 Sheet Alumenium, (breakaway) Single post | 3d | 2027-04-05 | 2027-04-07 | A62650 | 156d |
| A62670 |  | Traffic signs, ground mounted, 2 Sheet Alumenium, (breakaway) Single post | 2d | 2027-04-08 | 2027-04-10 | A62660 | 156d |
| A62680 |  | Traffic signs, ground mounted, Sheet Alumenium, (breakaway) Double post | 5d | 2027-04-11 | 2027-04-15 | A62670 | 156d |
| A62690 |  | Retroreflective raised pavement markers (Type A) | 3d | 2027-04-17 | 2027-04-19 | A62680 | 171d |
| A62700 |  | Ceramic raised pavement markers | 3d | 2027-04-20 | 2027-04-22 | A62690 | 171d |
| A62710 |  | Solar powered lighting cateyes pavement markers | 2d | 2027-06-07 | 2027-06-08 | A62700, A62630 | 152d |
|  | 3 | **Road 3** |  | 2026-05-06 | 2027-07-15 |  |  |
|  | AGG | **Aggregate Base Course** |  | 2026-05-06 | 2026-05-12 |  |  |
| A56800 |  | Aggregate base course | 6d | 2026-05-06 | 2026-05-12 | A59280, A62580 | 0d |
|  | BIT | **Bituminous Construction** |  | 2026-05-13 | 2026-06-09 |  |  |
| A56810 |  | Bituminous base course (Grading I - Class A) | 24d | 2026-05-13 | 2026-06-09 | A56800 | 98d |
|  | ASP | **Asphalt Wearing Course** |  | 2027-03-31 | 2027-04-19 |  |  |
| A56820 |  | Bituminous concrete wearing course | 17d | 2027-03-31 | 2027-04-19 | A56810, A62600 | 65d |
|  | CON | **Precast Concrete Curb** |  | 2027-05-26 | 2027-06-09 |  |  |
| A56830 |  | Concrete curb, Type (K1A) | 4d | 2027-05-26 | 2027-05-30 | A56800, A56820, A10270 | 89d |
| A56840 |  | Concrete curb, Type (K1B) | 4d | 2027-05-31 | 2027-06-03 | A56830, A10270 | 89d |
| A56850 |  | Concrete curb, Type (K2) | 5d | 2027-06-05 | 2027-06-09 | A56840, A10270 | 89d |
|  | PAV | **Pavement Markings** |  | 2027-06-10 | 2027-06-16 |  |  |
| A56860 |  | Retroreflective Thermoplastic White Traffic lines | 3d | 2027-06-10 | 2027-06-13 | A56850, A56820 | 89d |
| A56870 |  | Retroreflective Thermoplastic Yellow Traffic lines | 3d | 2027-06-14 | 2027-06-16 | A56860 | 89d |
|  | TRS | **Traffic Signage** |  | 2027-06-17 | 2027-07-15 |  |  |
| A56880 |  | Traffic signs, ground mounted, 1 Sheet Alumenium, (breakaway) Single post | 4d | 2027-06-17 | 2027-06-21 | A56870 | 89d |
| A56890 |  | Traffic signs, ground mounted, 2 Sheet Alumenium, (breakaway) Single post | 3d | 2027-06-22 | 2027-06-24 | A56880 | 89d |
| A56900 |  | Traffic signs, ground mounted, Sheet Alumenium, (breakaway) Double post | 7d | 2027-06-26 | 2027-07-03 | A56890 | 89d |
| A56910 |  | Retroreflective raised pavement markers (Type A) | 4d | 2027-07-04 | 2027-07-07 | A56900 | 102d |
| A56920 |  | Ceramic raised pavement markers | 4d | 2027-07-08 | 2027-07-12 | A56910 | 102d |
| A56930 |  | Solar powered lighting cateyes pavement markers | 3d | 2027-07-13 | 2027-07-15 | A56920 | 120d |
|  | 4 | **Road 4** |  | 2026-05-13 | 2027-06-14 |  |  |
|  | AGG | **Aggregate Base Course** |  | 2026-05-13 | 2026-05-19 |  |  |
| A56940 |  | Aggregate base course | 6d | 2026-05-13 | 2026-05-19 | A59340, A56800 | 0d |
|  | BIT | **Bituminous Construction** |  | 2026-05-20 | 2026-05-20 |  |  |
| A56950 |  | Bituminous base course (Grading I - Class A) | 1d | 2026-05-20 | 2026-05-20 | A56940 | 115d |
|  | ASP | **Asphalt Wearing Course** |  | 2027-04-20 | 2027-04-26 |  |  |
| A56960 |  | Bituminous concrete wearing course | 6d | 2027-04-20 | 2027-04-26 | A56950, A56820 | 65d |
|  | CON | **Precast Concrete Curb** |  | 2027-05-26 | 2027-06-02 |  |  |
| A56970 |  | Concrete curb, Type (K1A) | 3d | 2027-05-26 | 2027-05-29 | A56940, A56960, A10270 | 126d |
| A56980 |  | Concrete curb, Type (K1B) | 2d | 2027-05-30 | 2027-05-31 | A56970, A10270 | 126d |
| A56990 |  | Concrete curb, Type (K2) | 2d | 2027-06-01 | 2027-06-02 | A56980, A10270 | 126d |
|  | PAV | **Pavement Markings** |  | 2027-06-03 | 2027-06-05 |  |  |
| A57000 |  | Retroreflective Thermoplastic White Traffic lines | 1d | 2027-06-03 | 2027-06-03 | A56990, A56960 | 126d |
| A57010 |  | Retroreflective Thermoplastic Yellow Traffic lines | 1d | 2027-06-05 | 2027-06-05 | A57000 | 126d |
|  | TRS | **Traffic Signage** |  | 2027-06-06 | 2027-06-14 |  |  |

| ID | WBS | Task | Duration | Start | Finish | Predecessors | Total float |
| --- | --- | --- | --- | --- | --- | --- | --- |
| A57020 |  | Traffic signs, ground mounted, 1 Sheet Alumenium, (breakaway) Single post | 1d | 2027-06-06 | 2027-06-06 | A57010 | 126d |
| A57030 |  | Traffic signs, ground mounted, 2 Sheet Alumenium, (breakaway) Single post | 1d | 2027-06-07 | 2027-06-07 | A57020 | 126d |
| A57040 |  | Traffic signs, ground mounted, Sheet Alumenium, (breakaway) Double post | 3d | 2027-06-08 | 2027-06-10 | A57030 | 126d |
| A57050 |  | Retroreflective raised pavement markers (Type A) | 1d | 2027-06-12 | 2027-06-12 | A57040 | 127d |
| A57060 |  | Ceramic raised pavement markers | 1d | 2027-06-13 | 2027-06-13 | A57050 | 127d |
| A57070 |  | Solar powered lighting cateyes pavement markers | 1d | 2027-06-14 | 2027-06-14 | A57060 | 147d |
|  | 5 | **Road 5** |  | 2026-05-20 | 2027-06-09 |  |  |
|  | AGG | **Aggregate Base Course** |  | 2026-05-20 | 2026-05-26 |  |  |
| A57080 |  | Aggregate base course | 6d | 2026-05-20 | 2026-05-26 | A59370, A56940 | 0d |
|  | BIT | **Bituminous Construction** |  | 2026-05-27 | 2026-05-27 |  |  |
| A57090 |  | Bituminous base course (Grading I - Class A) | 1d | 2026-05-27 | 2026-05-27 | A57080 | 109d |
|  | ASP | **Asphalt Wearing Course** |  | 2027-04-27 | 2027-05-03 |  |  |
| A57100 |  | Bituminous concrete wearing course | 6d | 2027-04-27 | 2027-05-03 | A57090, A56960 | 65d |
|  | CON | **Precast Concrete Curb** |  | 2027-05-26 | 2027-05-29 |  |  |
| A57110 |  | Concrete curb, Type (K1A) | 1d | 2027-05-26 | 2027-05-26 | A57080, A57100, A10270 | 112d |
| A57120 |  | Concrete curb, Type (K1B) | 1d | 2027-05-27 | 2027-05-27 | A57110, A10270 | 112d |
| A57130 |  | Concrete curb, Type (K2) | 1d | 2027-05-29 | 2027-05-29 | A57120, A10270 | 112d |
|  | PAV | **Pavement Markings** |  | 2027-05-30 | 2027-05-31 |  |  |
| A57140 |  | Retroreflective Thermoplastic White Traffic lines | 1d | 2027-05-30 | 2027-05-30 | A57130, A57100 | 112d |
| A57150 |  | Retroreflective Thermoplastic Yellow Traffic lines | 1d | 2027-05-31 | 2027-05-31 | A57140 | 112d |
|  | TRS | **Traffic Signage** |  | 2027-06-01 | 2027-06-09 |  |  |
| A57160 |  | Traffic signs, ground mounted, 1 Sheet Alumenium, (breakaway) Single post | 1d | 2027-06-01 | 2027-06-01 | A57150 | 112d |
| A57170 |  | Traffic signs, ground mounted, 2 Sheet Alumenium, (breakaway) Single post | 1d | 2027-06-02 | 2027-06-02 | A57160 | 112d |
| A57180 |  | Traffic signs, ground mounted, Sheet Alumenium, (breakaway) Double post | 3d | 2027-06-03 | 2027-06-06 | A57170 | 112d |
| A57190 |  | Retroreflective raised pavement markers (Type A) | 1d | 2027-06-07 | 2027-06-07 | A57180 | 131d |
| A57200 |  | Ceramic raised pavement markers | 1d | 2027-06-08 | 2027-06-08 | A57190 | 131d |
| A57210 |  | Solar powered lighting cateyes pavement markers | 1d | 2027-06-09 | 2027-06-09 | A57200 | 151d |
|  | 6 | **Road 6** |  | 2026-05-27 | 2027-06-09 |  |  |
|  | AGG | **Aggregate Base Course** |  | 2026-05-27 | 2026-06-02 |  |  |
| A57220 |  | Aggregate base course | 6d | 2026-05-27 | 2026-06-02 | A59400, A57080 | 0d |
|  | BIT | **Bituminous Construction** |  | 2026-06-03 | 2026-06-08 |  |  |
| A57230 |  | Bituminous base course (Grading I - Class A) | 5d | 2026-06-03 | 2026-06-08 | A57220 | 99d |
|  | ASP | **Asphalt Wearing Course** |  | 2027-05-04 | 2027-05-10 |  |  |
| A57240 |  | Bituminous concrete wearing course | 6d | 2027-05-04 | 2027-05-10 | A57230, A57100 | 65d |
|  | CON | **Precast Concrete Curb** |  | 2027-05-26 | 2027-05-29 |  |  |
| A57250 |  | Concrete curb, Type (K1A) | 1d | 2027-05-26 | 2027-05-26 | A57220, A57240, A10270 | 112d |
| A57260 |  | Concrete curb, Type (K1B) | 1d | 2027-05-27 | 2027-05-27 | A57250, A10270 | 112d |
| A57270 |  | Concrete curb, Type (K2) | 1d | 2027-05-29 | 2027-05-29 | A57260, A10270 | 112d |
|  | PAV | **Pavement Markings** |  | 2027-05-30 | 2027-05-31 |  |  |
| A57280 |  | Retroreflective Thermoplastic White Traffic lines | 1d | 2027-05-30 | 2027-05-30 | A57270, A57240 | 112d |
| A57290 |  | Retroreflective Thermoplastic Yellow Traffic lines | 1d | 2027-05-31 | 2027-05-31 | A57280 | 112d |
|  | TRS | **Traffic Signage** |  | 2027-06-01 | 2027-06-09 |  |  |
| A57300 |  | Traffic signs, ground mounted, 1 Sheet Alumenium, (breakaway) Single post | 1d | 2027-06-01 | 2027-06-01 | A57290 | 112d |
| A57310 |  | Traffic signs, ground mounted, 2 Sheet Alumenium, (breakaway) Single post | 1d | 2027-06-02 | 2027-06-02 | A57300 | 112d |
| A57320 |  | Traffic signs, ground mounted, Sheet Alumenium, (breakaway) Double post | 3d | 2027-06-03 | 2027-06-06 | A57310 | 112d |
| A57330 |  | Retroreflective raised pavement markers (Type A) | 1d | 2027-06-07 | 2027-06-07 | A57320 | 131d |
| A57340 |  | Ceramic raised pavement markers | 1d | 2027-06-08 | 2027-06-08 | A57330 | 131d |
| A57350 |  | Solar powered lighting cateyes pavement markers | 1d | 2027-06-09 | 2027-06-09 | A57340 | 151d |
|  | 7 | **Road 7** |  | 2026-06-03 | 2027-06-09 |  |  |
|  | AGG | **Aggregate Base Course** |  | 2026-06-03 | 2026-06-09 |  |  |
| A57360 |  | Aggregate base course | 6d | 2026-06-03 | 2026-06-09 | A59430, A57220 | 0d |
|  | BIT | **Bituminous Construction** |  | 2026-06-10 | 2026-06-15 |  |  |
| A57370 |  | Bituminous base course (Grading I - Class A) | 5d | 2026-06-10 | 2026-06-15 | A57360 | 93d |
|  | ASP | **Asphalt Wearing Course** |  | 2027-05-11 | 2027-05-17 |  |  |
| A57380 |  | Bituminous concrete wearing course | 6d | 2027-05-11 | 2027-05-17 | A57370, A57240 | 65d |
|  | CON | **Precast Concrete Curb** |  | 2027-05-26 | 2027-05-29 |  |  |
| A57390 |  | Concrete curb, Type (K1A) | 1d | 2027-05-26 | 2027-05-26 | A57360, A57380, A10270 | 112d |
| A57400 |  | Concrete curb, Type (K1B) | 1d | 2027-05-27 | 2027-05-27 | A57390, A10270 | 112d |
| A57410 |  | Concrete curb, Type (K2) | 1d | 2027-05-29 | 2027-05-29 | A57400, A10270 | 112d |
|  | PAV | **Pavement Markings** |  | 2027-05-30 | 2027-05-31 |  |  |
| A57420 |  | Retroreflective Thermoplastic White Traffic lines | 1d | 2027-05-30 | 2027-05-30 | A57410, A57380 | 112d |
| A57430 |  | Retroreflective Thermoplastic Yellow Traffic lines | 1d | 2027-05-31 | 2027-05-31 | A57420 | 112d |
|  | TRS | **Traffic Signage** |  | 2027-06-01 | 2027-06-09 |  |  |
| A57440 |  | Traffic signs, ground mounted, 1 Sheet Alumenium, (breakaway) Single post | 1d | 2027-06-01 | 2027-06-01 | A57430 | 112d |
| A57450 |  | Traffic signs, ground mounted, 2 Sheet Alumenium, (breakaway) Single post | 1d | 2027-06-02 | 2027-06-02 | A57440 | 112d |
| A57460 |  | Traffic signs, ground mounted, Sheet Alumenium, (breakaway) Double post | 3d | 2027-06-03 | 2027-06-06 | A57450 | 112d |
| A57470 |  | Retroreflective raised pavement markers (Type A) | 1d | 2027-06-07 | 2027-06-07 | A57460 | 131d |
| A57480 |  | Ceramic raised pavement markers | 1d | 2027-06-08 | 2027-06-08 | A57470 | 131d |
| A57490 |  | Solar powered lighting cateyes pavement markers | 1d | 2027-06-09 | 2027-06-09 | A57480 | 151d |
|  | 8 | **Road 8** |  | 2026-06-10 | 2027-06-09 |  |  |

| ID | WBS | Task | Duration | Start | Finish | Predecessors | Total float |
| --- | --- | --- | --- | --- | --- | --- | --- |
|  | AGG | **Aggregate Base Course** |  | 2026-06-10 | 2026-06-16 |  |  |
| A57500 |  | Aggregate base course | 6d | 2026-06-10 | 2026-06-16 | A59460, A57360 | 0d |
|  | BIT | **Bituminous Construction** |  | 2026-06-17 | 2026-06-22 |  |  |
| A57510 |  | Bituminous base course (Grading I - Class A) | 5d | 2026-06-17 | 2026-06-22 | A57500 | 87d |
|  | ASP | **Asphalt Wearing Course** |  | 2027-05-18 | 2027-05-24 |  |  |
| A57520 |  | Bituminous concrete wearing course | 6d | 2027-05-18 | 2027-05-24 | A57510, A57380 | 65d |
|  | CON | **Precast Concrete Curb** |  | 2027-05-26 | 2027-05-29 |  |  |
| A57530 |  | Concrete curb, Type (K1A) | 1d | 2027-05-26 | 2027-05-26 | A57500, A57520, A10270 | 112d |
| A57540 |  | Concrete curb, Type (K1B) | 1d | 2027-05-27 | 2027-05-27 | A57530, A10270 | 112d |
| A57550 |  | Concrete curb, Type (K2) | 1d | 2027-05-29 | 2027-05-29 | A57540, A10270 | 112d |
|  | PAV | **Pavement Markings** |  | 2027-05-30 | 2027-05-31 |  |  |
| A57560 |  | Retroreflective Thermoplastic White Traffic lines | 1d | 2027-05-30 | 2027-05-30 | A57550, A57520 | 112d |
| A57570 |  | Retroreflective Thermoplastic Yellow Traffic lines | 1d | 2027-05-31 | 2027-05-31 | A57560 | 112d |
|  | TRS | **Traffic Signage** |  | 2027-06-01 | 2027-06-09 |  |  |
| A57580 |  | Traffic signs, ground mounted, 1 Sheet Alumenium, (breakaway) Single post | 1d | 2027-06-01 | 2027-06-01 | A57570 | 112d |
| A57590 |  | Traffic signs, ground mounted, 2 Sheet Alumenium, (breakaway) Single post | 1d | 2027-06-02 | 2027-06-02 | A57580 | 112d |
| A57600 |  | Traffic signs, ground mounted, Sheet Alumenium, (breakaway) Double post | 3d | 2027-06-03 | 2027-06-06 | A57590 | 112d |
| A57610 |  | Retroreflective raised pavement markers (Type A) | 1d | 2027-06-07 | 2027-06-07 | A57600 | 131d |
| A57620 |  | Ceramic raised pavement markers | 1d | 2027-06-08 | 2027-06-08 | A57610 | 131d |
| A57630 |  | Solar powered lighting cateyes pavement markers | 1d | 2027-06-09 | 2027-06-09 | A57620 | 151d |
|  | 9 | **Road 9** |  | 2026-06-17 | 2027-06-15 |  |  |
|  | AGG | **Aggregate Base Course** |  | 2026-06-17 | 2026-06-23 |  |  |
| A57640 |  | Aggregate base course | 6d | 2026-06-17 | 2026-06-23 | A59490, A57500 | 0d |
|  | BIT | **Bituminous Construction** |  | 2026-06-24 | 2026-06-29 |  |  |
| A57650 |  | Bituminous base course (Grading I - Class A) | 5d | 2026-06-24 | 2026-06-29 | A57640 | 81d |
|  | ASP | **Asphalt Wearing Course** |  | 2027-05-25 | 2027-05-31 |  |  |
| A57660 |  | Bituminous concrete wearing course | 6d | 2027-05-25 | 2027-05-31 | A57650, A57520 | 65d |
|  | CON | **Precast Concrete Curb** |  | 2027-06-01 | 2027-06-03 |  |  |
| A57670 |  | Concrete curb, Type (K1A) | 1d | 2027-06-01 | 2027-06-01 | A57640, A57660, A10270 | 107d |
| A57680 |  | Concrete curb, Type (K1B) | 1d | 2027-06-02 | 2027-06-02 | A57670, A10270 | 107d |
| A57690 |  | Concrete curb, Type (K2) | 1d | 2027-06-03 | 2027-06-03 | A57680, A10270 | 107d |
|  | PAV | **Pavement Markings** |  | 2027-06-05 | 2027-06-06 |  |  |
| A57700 |  | Retroreflective Thermoplastic White Traffic lines | 1d | 2027-06-05 | 2027-06-05 | A57690, A57660 | 107d |
| A57710 |  | Retroreflective Thermoplastic Yellow Traffic lines | 1d | 2027-06-06 | 2027-06-06 | A57700 | 107d |
|  | TRS | **Traffic Signage** |  | 2027-06-07 | 2027-06-15 |  |  |
| A57720 |  | Traffic signs, ground mounted, 1 Sheet Alumenium, (breakaway) Single post | 1d | 2027-06-07 | 2027-06-07 | A57710 | 107d |
| A57730 |  | Traffic signs, ground mounted, 2 Sheet Alumenium, (breakaway) Single post | 1d | 2027-06-08 | 2027-06-08 | A57720 | 107d |
| A57740 |  | Traffic signs, ground mounted, Sheet Alumenium, (breakaway) Double post | 3d | 2027-06-09 | 2027-06-12 | A57730 | 107d |
| A57750 |  | Retroreflective raised pavement markers (Type A) | 1d | 2027-06-13 | 2027-06-13 | A57740 | 126d |
| A57760 |  | Ceramic raised pavement markers | 1d | 2027-06-14 | 2027-06-14 | A57750 | 126d |
| A57770 |  | Solar powered lighting cateyes pavement markers | 1d | 2027-06-15 | 2027-06-15 | A57760 | 146d |
|  | 10 | **Road 10** |  | 2026-06-24 | 2027-06-16 |  |  |
|  | AGG | **Aggregate Base Course** |  | 2026-06-24 | 2026-06-30 |  |  |
| A57780 |  | Aggregate base course | 6d | 2026-06-24 | 2026-06-30 | A59520, A57640 | 0d |
|  | BIT | **Bituminous Construction** |  | 2026-07-01 | 2026-07-06 |  |  |
| A57790 |  | Bituminous base course (Grading I - Class A) | 5d | 2026-07-01 | 2026-07-06 | A57780 | 75d |
|  | ASP | **Asphalt Wearing Course** |  | 2027-06-01 | 2027-06-03 |  |  |
| A57800 |  | Bituminous concrete wearing course | 3d | 2027-06-01 | 2027-06-03 | A57790, A57660 | 65d |
|  | CON | **Precast Concrete Curb** |  | 2027-05-26 | 2027-06-05 |  |  |
| A57810 |  | Concrete curb, Type (K1A) | 1d | 2027-05-26 | 2027-05-26 | A57780, A10270 | 112d |
| A57820 |  | Concrete curb, Type (K1B) | 1d | 2027-05-27 | 2027-05-27 | A57810, A10270 | 112d |
| A57830 |  | Concrete curb, Type (K2) | 1d | 2027-06-05 | 2027-06-05 | A57820, A57800, A10270 | 106d |
|  | PAV | **Pavement Markings** |  | 2027-06-06 | 2027-06-07 |  |  |
| A57840 |  | Retroreflective Thermoplastic White Traffic lines | 1d | 2027-06-06 | 2027-06-06 | A57830, A57800 | 106d |
| A57850 |  | Retroreflective Thermoplastic Yellow Traffic lines | 1d | 2027-06-07 | 2027-06-07 | A57840 | 106d |
|  | TRS | **Traffic Signage** |  | 2027-06-08 | 2027-06-16 |  |  |
| A57860 |  | Traffic signs, ground mounted, 1 Sheet Alumenium, (breakaway) Single post | 1d | 2027-06-08 | 2027-06-08 | A57850 | 106d |
| A57870 |  | Traffic signs, ground mounted, 2 Sheet Alumenium, (breakaway) Single post | 1d | 2027-06-09 | 2027-06-09 | A57860 | 106d |
| A57880 |  | Traffic signs, ground mounted, Sheet Alumenium, (breakaway) Double post | 3d | 2027-06-10 | 2027-06-13 | A57870 | 106d |
| A57890 |  | Retroreflective raised pavement markers (Type A) | 1d | 2027-06-14 | 2027-06-14 | A57880 | 125d |
| A57900 |  | Ceramic raised pavement markers | 1d | 2027-06-15 | 2027-06-15 | A57890 | 125d |
| A57910 |  | Solar powered lighting cateyes pavement markers | 1d | 2027-06-16 | 2027-06-16 | A57900 | 145d |
|  | 11 | **Road 11** |  | 2026-07-01 | 2027-06-22 |  |  |
|  | AGG | **Aggregate Base Course** |  | 2026-07-01 | 2026-07-07 |  |  |
| A57920 |  | Aggregate base course | 6d | 2026-07-01 | 2026-07-07 | A59550, A57780 | 1d |
|  | BIT | **Bituminous Construction** |  | 2026-07-08 | 2026-07-13 |  |  |
| A57930 |  | Bituminous base course (Grading I - Class A) | 5d | 2026-07-08 | 2026-07-13 | A57920 | 69d |
|  | ASP | **Asphalt Wearing Course** |  | 2027-06-05 | 2027-06-07 |  |  |
| A57940 |  | Bituminous concrete wearing course | 3d | 2027-06-05 | 2027-06-07 | A57930, A57800 | 65d |
|  | CON | **Precast Concrete Curb** |  | 2027-06-08 | 2027-06-10 |  |  |

| ID | WBS | Task | Duration | Start | Finish | Predecessors | Total float |
| --- | --- | --- | --- | --- | --- | --- | --- |
| A57950 |  | Concrete curb, Type (K1A) | 1d | 2027-06-08 | 2027-06-08 | A57920, A57940, A10270 | 101d |
| A57960 |  | Concrete curb, Type (K1B) | 1d | 2027-06-09 | 2027-06-09 | A57950, A10270 | 101d |
| A57970 |  | Concrete curb, Type (K2) | 1d | 2027-06-10 | 2027-06-10 | A57960, A10270 | 101d |
|  | PAV | **Pavement Markings** |  | 2027-06-12 | 2027-06-13 |  |  |
| A57980 |  | Retroreflective Thermoplastic White Traffic lines | 1d | 2027-06-12 | 2027-06-12 | A57970, A57940 | 101d |
| A57990 |  | Retroreflective Thermoplastic Yellow Traffic lines | 1d | 2027-06-13 | 2027-06-13 | A57980 | 101d |
|  | TRS | **Traffic Signage** |  | 2027-06-14 | 2027-06-22 |  |  |
| A58000 |  | Traffic signs, ground mounted, 1 Sheet Alumenium, (breakaway) Single post | 1d | 2027-06-14 | 2027-06-14 | A57990 | 101d |
| A58010 |  | Traffic signs, ground mounted, 2 Sheet Alumenium, (breakaway) Single post | 1d | 2027-06-15 | 2027-06-15 | A58000 | 101d |
| A58020 |  | Traffic signs, ground mounted, Sheet Alumenium, (breakaway) Double post | 3d | 2027-06-16 | 2027-06-19 | A58010 | 101d |
| A58030 |  | Retroreflective raised pavement markers (Type A) | 1d | 2027-06-20 | 2027-06-20 | A58020 | 120d |
| A58040 |  | Ceramic raised pavement markers | 1d | 2027-06-21 | 2027-06-21 | A58030 | 120d |
| A58050 |  | Solar powered lighting cateyes pavement markers | 1d | 2027-06-22 | 2027-06-22 | A58040 | 140d |
|  | 12 | **Road 12** |  | 2026-07-01 | 2027-06-26 |  |  |
|  | AGG | **Aggregate Base Course** |  | 2026-07-01 | 2026-07-07 |  |  |
| A58060 |  | Aggregate base course | 6d | 2026-07-01 | 2026-07-07 | A59580, A57920 SS, A57920 FF | 1d |
|  | BIT | **Bituminous Construction** |  | 2026-07-08 | 2026-07-13 |  |  |
| A58070 |  | Bituminous base course (Grading I - Class A) | 5d | 2026-07-08 | 2026-07-13 | A58060 | 69d |
|  | ASP | **Asphalt Wearing Course** |  | 2027-06-08 | 2027-06-10 |  |  |
| A58080 |  | Bituminous concrete wearing course | 3d | 2027-06-08 | 2027-06-10 | A58070, A57940 | 65d |
|  | CON | **Precast Concrete Curb** |  | 2027-06-12 | 2027-06-14 |  |  |
| A58090 |  | Concrete curb, Type (K1A) | 1d | 2027-06-12 | 2027-06-12 | A58060, A58080, A10270 | 98d |
| A58100 |  | Concrete curb, Type (K1B) | 1d | 2027-06-13 | 2027-06-13 | A58090, A10270 | 98d |
| A58110 |  | Concrete curb, Type (K2) | 1d | 2027-06-14 | 2027-06-14 | A58100, A10270 | 98d |
|  | PAV | **Pavement Markings** |  | 2027-06-15 | 2027-06-16 |  |  |
| A58120 |  | Retroreflective Thermoplastic White Traffic lines | 1d | 2027-06-15 | 2027-06-15 | A58110, A58080 | 98d |
| A58130 |  | Retroreflective Thermoplastic Yellow Traffic lines | 1d | 2027-06-16 | 2027-06-16 | A58120 | 98d |
|  | TRS | **Traffic Signage** |  | 2027-06-17 | 2027-06-26 |  |  |
| A58140 |  | Traffic signs, ground mounted, 1 Sheet Alumenium, (breakaway) Single post | 1d | 2027-06-17 | 2027-06-17 | A58130 | 98d |
| A58150 |  | Traffic signs, ground mounted, 2 Sheet Alumenium, (breakaway) Single post | 1d | 2027-06-19 | 2027-06-19 | A58140 | 98d |
| A58160 |  | Traffic signs, ground mounted, Sheet Alumenium, (breakaway) Double post | 3d | 2027-06-20 | 2027-06-22 | A58150 | 98d |
| A58170 |  | Retroreflective raised pavement markers (Type A) | 1d | 2027-06-23 | 2027-06-23 | A58160 | 117d |
| A58180 |  | Ceramic raised pavement markers | 1d | 2027-06-24 | 2027-06-24 | A58170 | 117d |
| A58190 |  | Solar powered lighting cateyes pavement markers | 1d | 2027-06-26 | 2027-06-26 | A58180 | 137d |
|  | 13 | **Road 13** |  | 2026-07-08 | 2027-06-29 |  |  |
|  | AGG | **Aggregate Base Course** |  | 2026-07-08 | 2026-07-14 |  |  |
| A58200 |  | Aggregate base course | 6d | 2026-07-08 | 2026-07-14 | A59610, A58060 | 1d |
|  | BIT | **Bituminous Construction** |  | 2026-07-15 | 2026-07-20 |  |  |
| A58210 |  | Bituminous base course (Grading I - Class A) | 5d | 2026-07-15 | 2026-07-20 | A58200 | 63d |
|  | ASP | **Asphalt Wearing Course** |  | 2027-06-12 | 2027-06-14 |  |  |
| A58220 |  | Bituminous concrete wearing course | 3d | 2027-06-12 | 2027-06-14 | A58210, A58080 | 65d |
|  | CON | **Precast Concrete Curb** |  | 2027-06-15 | 2027-06-17 |  |  |
| A58230 |  | Concrete curb, Type (K1A) | 1d | 2027-06-15 | 2027-06-15 | A58200, A58220, A10270 | 95d |
| A58240 |  | Concrete curb, Type (K1B) | 1d | 2027-06-16 | 2027-06-16 | A58230, A10270 | 95d |
| A58250 |  | Concrete curb, Type (K2) | 1d | 2027-06-17 | 2027-06-17 | A58240, A10270 | 95d |
|  | PAV | **Pavement Markings** |  | 2027-06-19 | 2027-06-20 |  |  |
| A58260 |  | Retroreflective Thermoplastic White Traffic lines | 1d | 2027-06-19 | 2027-06-19 | A58250, A58220 | 95d |
| A58270 |  | Retroreflective Thermoplastic Yellow Traffic lines | 1d | 2027-06-20 | 2027-06-20 | A58260 | 95d |
|  | TRS | **Traffic Signage** |  | 2027-06-21 | 2027-06-29 |  |  |
| A58280 |  | Traffic signs, ground mounted, 1 Sheet Alumenium, (breakaway) Single post | 1d | 2027-06-21 | 2027-06-21 | A58270 | 95d |
| A58290 |  | Traffic signs, ground mounted, 2 Sheet Alumenium, (breakaway) Single post | 1d | 2027-06-22 | 2027-06-22 | A58280 | 95d |
| A58300 |  | Traffic signs, ground mounted, Sheet Alumenium, (breakaway) Double post | 3d | 2027-06-23 | 2027-06-26 | A58290 | 95d |
| A58310 |  | Retroreflective raised pavement markers (Type A) | 1d | 2027-06-27 | 2027-06-27 | A58300 | 114d |
| A58320 |  | Ceramic raised pavement markers | 1d | 2027-06-28 | 2027-06-28 | A58310 | 114d |
| A58330 |  | Solar powered lighting cateyes pavement markers | 1d | 2027-06-29 | 2027-06-29 | A58320 | 134d |
|  | 14 | **Road 14** |  | 2026-07-15 | 2027-07-03 |  |  |
|  | AGG | **Aggregate Base Course** |  | 2026-07-15 | 2026-07-21 |  |  |
| A58340 |  | Aggregate base course | 6d | 2026-07-15 | 2026-07-21 | A59640, A58200 | 1d |
|  | BIT | **Bituminous Construction** |  | 2026-07-22 | 2026-07-27 |  |  |
| A58350 |  | Bituminous base course (Grading I - Class A) | 5d | 2026-07-22 | 2026-07-27 | A58340 | 57d |
|  | ASP | **Asphalt Wearing Course** |  | 2027-06-15 | 2027-06-17 |  |  |
| A58360 |  | Bituminous concrete wearing course | 3d | 2027-06-15 | 2027-06-17 | A58350, A58220 | 65d |
|  | CON | **Precast Concrete Curb** |  | 2027-06-19 | 2027-06-21 |  |  |
| A58370 |  | Concrete curb, Type (K1A) | 1d | 2027-06-19 | 2027-06-19 | A58340, A58360, A10270 | 92d |
| A58380 |  | Concrete curb, Type (K1B) | 1d | 2027-06-20 | 2027-06-20 | A58370, A10270 | 92d |
| A58390 |  | Concrete curb, Type (K2) | 1d | 2027-06-21 | 2027-06-21 | A58380, A10270 | 92d |
|  | PAV | **Pavement Markings** |  | 2027-06-22 | 2027-06-23 |  |  |
| A58400 |  | Retroreflective Thermoplastic White Traffic lines | 1d | 2027-06-22 | 2027-06-22 | A58390, A58360 | 92d |
| A58410 |  | Retroreflective Thermoplastic Yellow Traffic lines | 1d | 2027-06-23 | 2027-06-23 | A58400 | 92d |
|  | TRS | **Traffic Signage** |  | 2027-06-24 | 2027-07-03 |  |  |

| ID | WBS | Task | Duration | Start | Finish | Predecessors | Total float |
| --- | --- | --- | --- | --- | --- | --- | --- |
| A58420 |  | Traffic signs, ground mounted, 1 Sheet Alumenium, (breakaway) Single post | 1d | 2027-06-24 | 2027-06-24 | A58410 | 92d |
| A58430 |  | Traffic signs, ground mounted, 2 Sheet Alumenium, (breakaway) Single post | 1d | 2027-06-26 | 2027-06-26 | A58420 | 92d |
| A58440 |  | Traffic signs, ground mounted, Sheet Alumenium, (breakaway) Double post | 3d | 2027-06-27 | 2027-06-29 | A58430 | 92d |
| A58450 |  | Retroreflective raised pavement markers (Type A) | 1d | 2027-06-30 | 2027-06-30 | A58440 | 111d |
| A58460 |  | Ceramic raised pavement markers | 1d | 2027-07-01 | 2027-07-01 | A58450 | 111d |
| A58470 |  | Solar powered lighting cateyes pavement markers | 1d | 2027-07-03 | 2027-07-03 | A58460 | 131d |
|  | 15 | **Road 15** |  | 2026-07-22 | 2027-07-06 |  |  |
|  | AGG | **Aggregate Base Course** |  | 2026-07-22 | 2026-07-28 |  |  |
| A58480 |  | Aggregate base course | 6d | 2026-07-22 | 2026-07-28 | A59670, A58340 | 1d |
|  | BIT | **Bituminous Construction** |  | 2026-07-29 | 2026-07-29 |  |  |
| A58490 |  | Bituminous base course (Grading I - Class A) | 1d | 2026-07-29 | 2026-07-29 | A58480 | 55d |
|  | ASP | **Asphalt Wearing Course** |  | 2027-06-19 | 2027-06-21 |  |  |
| A58500 |  | Bituminous concrete wearing course | 3d | 2027-06-19 | 2027-06-21 | A58490, A58360 | 65d |
|  | CON | **Precast Concrete Curb** |  | 2027-06-22 | 2027-06-24 |  |  |
| A58510 |  | Concrete curb, Type (K1A) | 1d | 2027-06-22 | 2027-06-22 | A58480, A58500, A10270 | 89d |
| A58520 |  | Concrete curb, Type (K1B) | 1d | 2027-06-23 | 2027-06-23 | A58510, A10270 | 89d |
| A58530 |  | Concrete curb, Type (K2) | 1d | 2027-06-24 | 2027-06-24 | A58520, A10270 | 89d |
|  | PAV | **Pavement Markings** |  | 2027-06-26 | 2027-06-27 |  |  |
| A58540 |  | Retroreflective Thermoplastic White Traffic lines | 1d | 2027-06-26 | 2027-06-26 | A58530, A58500 | 89d |
| A58550 |  | Retroreflective Thermoplastic Yellow Traffic lines | 1d | 2027-06-27 | 2027-06-27 | A58540 | 89d |
|  | TRS | **Traffic Signage** |  | 2027-06-28 | 2027-07-06 |  |  |
| A58560 |  | Traffic signs, ground mounted, 1 Sheet Alumenium, (breakaway) Single post | 1d | 2027-06-28 | 2027-06-28 | A58550 | 89d |
| A58570 |  | Traffic signs, ground mounted, 2 Sheet Alumenium, (breakaway) Single post | 1d | 2027-06-29 | 2027-06-29 | A58560 | 89d |
| A58580 |  | Traffic signs, ground mounted, Sheet Alumenium, (breakaway) Double post | 3d | 2027-06-30 | 2027-07-03 | A58570 | 89d |
| A58590 |  | Retroreflective raised pavement markers (Type A) | 1d | 2027-07-04 | 2027-07-04 | A58580 | 108d |
| A58600 |  | Ceramic raised pavement markers | 1d | 2027-07-05 | 2027-07-05 | A58590 | 108d |
| A58610 |  | Solar powered lighting cateyes pavement markers | 1d | 2027-07-06 | 2027-07-06 | A58600 | 128d |
|  | 16 | **Road 16** |  | 2026-07-29 | 2027-07-08 |  |  |
|  | AGG | **Aggregate Base Course** |  | 2026-07-29 | 2026-08-04 |  |  |
| A58620 |  | Aggregate base course | 6d | 2026-07-29 | 2026-08-04 | A59700, A58480 | 1d |
|  | BIT | **Bituminous Construction** |  | 2026-08-05 | 2026-08-10 |  |  |
| A58630 |  | Bituminous base course (Grading I - Class A) | 5d | 2026-08-05 | 2026-08-10 | A58620 | 45d |
|  | ASP | **Asphalt Wearing Course** |  | 2027-06-22 | 2027-06-23 |  |  |
| A58640 |  | Bituminous concrete wearing course | 2d | 2027-06-22 | 2027-06-23 | A58630, A58500 | 65d |
|  | CON | **Precast Concrete Curb** |  | 2027-06-24 | 2027-06-27 |  |  |
| A58650 |  | Concrete curb, Type (K1A) | 1d | 2027-06-24 | 2027-06-24 | A58620, A58640, A10270 | 87d |
| A58660 |  | Concrete curb, Type (K1B) | 1d | 2027-06-26 | 2027-06-26 | A58650, A10270 | 87d |
| A58670 |  | Concrete curb, Type (K2) | 1d | 2027-06-27 | 2027-06-27 | A58660, A10270 | 87d |
|  | PAV | **Pavement Markings** |  | 2027-06-28 | 2027-06-29 |  |  |
| A58680 |  | Retroreflective Thermoplastic White Traffic lines | 1d | 2027-06-28 | 2027-06-28 | A58670, A58640 | 87d |
| A58690 |  | Retroreflective Thermoplastic Yellow Traffic lines | 1d | 2027-06-29 | 2027-06-29 | A58680 | 87d |
|  | TRS | **Traffic Signage** |  | 2027-06-30 | 2027-07-08 |  |  |
| A58700 |  | Traffic signs, ground mounted, 1 Sheet Alumenium, (breakaway) Single post | 1d | 2027-06-30 | 2027-06-30 | A58690 | 87d |
| A58710 |  | Traffic signs, ground mounted, 2 Sheet Alumenium, (breakaway) Single post | 1d | 2027-07-01 | 2027-07-01 | A58700 | 87d |
| A58720 |  | Traffic signs, ground mounted, Sheet Alumenium, (breakaway) Double post | 3d | 2027-07-03 | 2027-07-05 | A58710 | 87d |
| A58730 |  | Retroreflective raised pavement markers (Type A) | 1d | 2027-07-06 | 2027-07-06 | A58720 | 106d |
| A58740 |  | Ceramic raised pavement markers | 1d | 2027-07-07 | 2027-07-07 | A58730 | 106d |
| A58750 |  | Solar powered lighting cateyes pavement markers | 1d | 2027-07-08 | 2027-07-08 | A58740 | 126d |
|  | 17 | **Road 17** |  | 2026-08-05 | 2027-07-11 |  |  |
|  | AGG | **Aggregate Base Course** |  | 2026-08-05 | 2026-08-11 |  |  |
| A58760 |  | Aggregate base course | 6d | 2026-08-05 | 2026-08-11 | A59760, A58620 | 1d |
|  | BIT | **Bituminous Construction** |  | 2026-08-12 | 2026-08-17 |  |  |
| A58770 |  | Bituminous base course (Grading I - Class A) | 5d | 2026-08-12 | 2026-08-17 | A58760 | 37d |
|  | ASP | **Asphalt Wearing Course** |  | 2027-06-24 | 2027-06-26 |  |  |
| A58780 |  | Bituminous concrete wearing course | 2d | 2027-06-24 | 2027-06-26 | A58770, A58640 | 65d |
|  | CON | **Precast Concrete Curb** |  | 2027-06-27 | 2027-06-29 |  |  |
| A58790 |  | Concrete curb, Type (K1A) | 1d | 2027-06-27 | 2027-06-27 | A58760, A58780, A10270 | 83d |
| A58800 |  | Concrete curb, Type (K1B) | 1d | 2027-06-28 | 2027-06-28 | A58790, A10270 | 83d |
| A58810 |  | Concrete curb, Type (K2) | 1d | 2027-06-29 | 2027-06-29 | A58800, A10270 | 83d |
|  | PAV | **Pavement Markings** |  | 2027-06-30 | 2027-07-01 |  |  |
| A58820 |  | Retroreflective Thermoplastic White Traffic lines | 1d | 2027-06-30 | 2027-06-30 | A58810, A58780 | 83d |
| A58830 |  | Retroreflective Thermoplastic Yellow Traffic lines | 1d | 2027-07-01 | 2027-07-01 | A58820 | 83d |
|  | TRS | **Traffic Signage** |  | 2027-07-03 | 2027-07-11 |  |  |
| A58840 |  | Traffic signs, ground mounted, 1 Sheet Alumenium, (breakaway) Single post | 1d | 2027-07-03 | 2027-07-03 | A58830 | 83d |
| A58850 |  | Traffic signs, ground mounted, 2 Sheet Alumenium, (breakaway) Single post | 1d | 2027-07-04 | 2027-07-04 | A58840 | 83d |
| A58860 |  | Traffic signs, ground mounted, Sheet Alumenium, (breakaway) Double post | 3d | 2027-07-05 | 2027-07-07 | A58850 | 83d |
| A58870 |  | Retroreflective raised pavement markers (Type A) | 1d | 2027-07-08 | 2027-07-08 | A58860 | 83d |
| A58880 |  | Ceramic raised pavement markers | 1d | 2027-07-10 | 2027-07-10 | A58870 | 83d |
| A58890 |  | Solar powered lighting cateyes pavement markers | 1d | 2027-07-11 | 2027-07-11 | A58880 | 124d |
|  | 18 | **Collector 1** |  | 2026-08-12 | 2027-08-05 |  |  |

| ID | WBS | Task | Duration | Start | Finish | Predecessors | Total float |
| --- | --- | --- | --- | --- | --- | --- | --- |
|  | AGG | **Aggregate Base Course** |  | 2026-08-12 | 2026-08-25 |  |  |
| A58900 |  | Aggregate base course | 12d | 2026-08-12 | 2026-08-25 | A59820, A58760 | 1d |
|  | BIT | **Bituminous Construction** |  | 2026-08-26 | 2026-09-23 |  |  |
| A58910 |  | Bituminous base course (Grading I - Class A) | 25d | 2026-08-26 | 2026-09-23 | A58900 | 1d |
|  | ASP | **Asphalt Wearing Course** |  | 2027-06-27 | 2027-07-07 |  |  |
| A58920 |  | Bituminous concrete wearing course | 10d | 2027-06-27 | 2027-07-07 | A58910, A58780 | 65d |
|  | CON | **Precast Concrete Curb** |  | 2027-07-08 | 2027-07-19 |  |  |
| A58930 |  | Concrete curb, Type (K1A) | 3d | 2027-07-08 | 2027-07-11 | A58900, A58920, A10270 | 65d |
| A58940 |  | Concrete curb, Type (K1B) | 3d | 2027-07-12 | 2027-07-14 | A58930, A10270 | 65d |
| A58950 |  | Concrete curb, Type (K2) | 4d | 2027-07-15 | 2027-07-19 | A58940, A10270 | 65d |
|  | PAV | **Pavement Markings** |  | 2027-07-20 | 2027-07-24 |  |  |
| A58960 |  | Retroreflective Thermoplastic White Traffic lines | 2d | 2027-07-20 | 2027-07-21 | A58950, A58920 | 65d |
| A58970 |  | Retroreflective Thermoplastic Yellow Traffic lines | 2d | 2027-07-22 | 2027-07-24 | A58960 | 65d |
|  | TRS | **Traffic Signage** |  | 2027-07-25 | 2027-08-05 |  |  |
| A58980 |  | Traffic signs, ground mounted, 1 Sheet Alumenium, (breakaway) Single post | 2d | 2027-07-25 | 2027-07-26 | A58970 | 65d |
| A58990 |  | Traffic signs, ground mounted, 2 Sheet Alumenium, (breakaway) Single post | 1d | 2027-07-27 | 2027-07-27 | A58980 | 65d |
| A59000 |  | Traffic signs, ground mounted, Sheet Alumenium, (breakaway) Double post | 3d | 2027-07-28 | 2027-07-31 | A58990 | 65d |
| A59010 |  | Retroreflective raised pavement markers (Type A) | 2d | 2027-08-01 | 2027-08-02 | A59000 | 82d |
| A59020 |  | Ceramic raised pavement markers | 2d | 2027-08-03 | 2027-08-04 | A59010 | 82d |
| A59030 |  | Solar powered lighting cateyes pavement markers | 1d | 2027-08-05 | 2027-08-05 | A59020 | 102d |
|  | LW | **LANDSCAPE WORK** |  | 2027-04-17 | 2027-09-18 |  |  |
|  | 1 | **Road 1** |  | 2027-06-30 | 2027-08-17 |  |  |
|  | 2 | **Trees/ Palms** |  | 2027-06-30 | 2027-07-24 |  |  |
| A59040 |  | Roadside tree - Cordia sebestena | 21d | 2027-06-30 | 2027-07-24 | A56760, A1760, A1770, A1780, A1790, A1800, A10300, A10310 SS+5d, A10320, A88420, A10310 FF+5d | 113d |
| A59050 |  | Roadside tree - Parkinsonia aculeata | 21d | 2027-06-30 | 2027-07-24 | A56760, A88420 | 113d |
| A59060 |  | Roadside tree - Dalbergia sissoo | 21d | 2027-06-30 | 2027-07-24 | A56760, A88420 | 113d |
| A59070 |  | Roadside tree - Acacia stenophylla | 21d | 2027-06-30 | 2027-07-24 | A56760, A88420 | 113d |
| A59080 |  | Roadside tree - Hibiscus tiliaceus | 21d | 2027-06-30 | 2027-07-24 | A56760, A88420 | 113d |
| A59090 |  | Roadside tree - Azadirachla indica | 21d | 2027-06-30 | 2027-07-24 | A56760, A88420 | 92d |
|  | 3 | **Miscellaneous Landscaping Items** |  | 2027-07-07 | 2027-07-31 |  |  |
| A59100 |  | Install Precast concrete block paving for sidewalk, mixed grey colour | 21d | 2027-07-07 | 2027-07-31 | A56780, A88420 | 107d |
| A59110 |  | Install Precast concrete block paving for main intrsection, colour light grey | 21d | 2027-07-07 | 2027-07-31 | A56780, A88420 | 107d |
| A59120 |  | install Precast concrete block paving for main intrsection, colour mid grey | 21d | 2027-07-07 | 2027-07-31 | A56780, A88420 | 107d |
| A59130 |  | install Precast concrete block paving for main intrsection, colour dark grey | 21d | 2027-07-07 | 2027-07-31 | A56780, A88420 | 107d |
| A59140 |  | Gravel, mixed dark beige + medium beige + light beige | 21d | 2027-07-07 | 2027-07-31 | A56780, A88420 | 107d |
| A59150 |  | Concrete heel kerb | 21d | 2027-07-07 | 2027-07-31 | A56780, A88420 | 107d |
|  | 1 | **Ground Cover And Shrubs** |  | 2027-07-25 | 2027-08-17 |  |  |
| A59160 |  | Lantana montevidensis | 21d | 2027-07-25 | 2027-08-17 | A59090 | 92d |
| A59170 |  | Portulaca grandiflora | 21d | 2027-07-25 | 2027-08-17 | A59090 | 92d |
| A59180 |  | Dodonaea viscosa | 21d | 2027-07-25 | 2027-08-17 | A59090 | 92d |
| A59190 |  | Atriplex halimus | 21d | 2027-07-25 | 2027-08-17 | A59090 | 92d |
|  | 2 | **Road 2** |  | 2027-04-17 | 2027-06-03 |  |  |
|  | 2 | **Trees/ Palms** |  | 2027-04-17 | 2027-05-10 |  |  |
| A59900 |  | Roadside tree - Cordia sebestena | 21d | 2027-04-17 | 2027-05-10 | A62680, A88420 | 177d |
| A59910 |  | Roadside tree - Parkinsonia aculeata | 21d | 2027-04-17 | 2027-05-10 | A62680, A88420 | 177d |
| A59920 |  | Roadside tree - Dalbergia sissoo | 21d | 2027-04-17 | 2027-05-10 | A62680, A88420 | 177d |
| A59930 |  | Roadside tree - Acacia stenophylla | 21d | 2027-04-17 | 2027-05-10 | A62680, A88420 | 177d |
| A59940 |  | Roadside tree - Hibiscus tiliaceus | 21d | 2027-04-17 | 2027-05-10 | A62680, A88420 | 177d |
| A59950 |  | Roadside tree - Azadirachla indica | 21d | 2027-04-17 | 2027-05-10 | A62680, A88420 | 156d |
|  | 3 | **Miscellaneous Landscaping Items** |  | 2027-04-24 | 2027-05-17 |  |  |
| A59960 |  | Install Precast concrete block paving for sidewalk, mixed grey colour | 21d | 2027-04-24 | 2027-05-17 | A62700, A88420 | 171d |
| A59970 |  | Install Precast concrete block paving for main intrsection, colour light grey | 21d | 2027-04-24 | 2027-05-17 | A62700, A88420 | 171d |
| A59980 |  | install Precast concrete block paving for main intrsection, colour mid grey | 21d | 2027-04-24 | 2027-05-17 | A62700, A88420 | 171d |
| A59990 |  | install Precast concrete block paving for main intrsection, colour dark grey | 21d | 2027-04-24 | 2027-05-17 | A62700, A88420 | 171d |
| A60000 |  | Gravel, mixed dark beige + medium beige + light beige | 21d | 2027-04-24 | 2027-05-17 | A62700, A88420 | 171d |
| A60010 |  | Concrete heel kerb | 21d | 2027-04-24 | 2027-05-17 | A62700, A88420 | 171d |
|  | 1 | **Ground Cover And Shrubs** |  | 2027-05-11 | 2027-06-03 |  |  |
| A59860 |  | Lantana montevidensis | 21d | 2027-05-11 | 2027-06-03 | A59950 | 156d |
| A59870 |  | Portulaca grandiflora | 21d | 2027-05-11 | 2027-06-03 | A59950 | 156d |
| A59880 |  | Dodonaea viscosa | 21d | 2027-05-11 | 2027-06-03 | A59950 | 156d |
| A59890 |  | Atriplex halimus | 21d | 2027-05-11 | 2027-06-03 | A59950 | 156d |
|  | 3 | **Road 3** |  | 2027-07-04 | 2027-08-21 |  |  |
|  | 2 | **Trees/ Palms** |  | 2027-07-04 | 2027-07-27 |  |  |
| A60060 |  | Roadside tree - Cordia sebestena | 21d | 2027-07-04 | 2027-07-27 | A56900, A88420 | 110d |
| A60070 |  | Roadside tree - Parkinsonia aculeata | 21d | 2027-07-04 | 2027-07-27 | A56900, A88420 | 110d |
| A60080 |  | Roadside tree - Dalbergia sissoo | 21d | 2027-07-04 | 2027-07-27 | A56900, A88420 | 110d |
| A60090 |  | Roadside tree - Acacia stenophylla | 21d | 2027-07-04 | 2027-07-27 | A56900, A88420 | 110d |
| A60100 |  | Roadside tree - Hibiscus tiliaceus | 21d | 2027-07-04 | 2027-07-27 | A56900, A88420 | 110d |
| A60110 |  | Roadside tree - Azadirachla indica | 21d | 2027-07-04 | 2027-07-27 | A56900, A88420 | 89d |
|  | 3 | **Miscellaneous Landscaping Items** |  | 2027-07-13 | 2027-08-05 |  |  |

| ID | WBS | Task | Duration | Start | Finish | Predecessors | Total float |
| --- | --- | --- | --- | --- | --- | --- | --- |
| A60120 |  | Install Precast concrete block paving for sidewalk, mixed grey colour | 21d | 2027-07-13 | 2027-08-05 | A56920, A88420 | 102d |
| A60130 |  | Install Precast concrete block paving for main intrsection, colour light grey | 21d | 2027-07-13 | 2027-08-05 | A56920, A88420 | 102d |
| A60140 |  | install Precast concrete block paving for main intrsection, colour mid grey | 21d | 2027-07-13 | 2027-08-05 | A56920, A88420 | 102d |
| A60150 |  | install Precast concrete block paving for main intrsection, colour dark grey | 21d | 2027-07-13 | 2027-08-05 | A56920, A88420 | 102d |
| A60160 |  | Gravel, mixed dark beige + medium beige + light beige | 21d | 2027-07-13 | 2027-08-05 | A56920, A88420 | 102d |
| A60170 |  | Concrete heel kerb | 21d | 2027-07-13 | 2027-08-05 | A56920, A88420 | 102d |
|  | 1 | **Ground Cover And Shrubs** |  | 2027-07-28 | 2027-08-21 |  |  |
| A60020 |  | Lantana montevidensis | 21d | 2027-07-28 | 2027-08-21 | A60110, A88420 | 89d |
| A60030 |  | Portulaca grandiflora | 21d | 2027-07-28 | 2027-08-21 | A60110, A88420 | 89d |
| A60040 |  | Dodonaea viscosa | 21d | 2027-07-28 | 2027-08-21 | A60110, A88420 | 89d |
| A60050 |  | Atriplex halimus | 21d | 2027-07-28 | 2027-08-21 | A60110, A88420 | 89d |
|  | 4 | **Road 4** |  | 2027-06-12 | 2027-07-08 |  |  |
|  | 2 | **Trees/ Palms** |  | 2027-06-12 | 2027-06-14 |  |  |
| A60220 |  | Roadside tree - Cordia sebestena | 3d | 2027-06-12 | 2027-06-14 | A57040, A88420 | 147d |
| A60230 |  | Roadside tree - Parkinsonia aculeata | 3d | 2027-06-12 | 2027-06-14 | A57040, A88420 | 147d |
| A60240 |  | Roadside tree - Dalbergia sissoo | 3d | 2027-06-12 | 2027-06-14 | A57040, A88420 | 147d |
| A60250 |  | Roadside tree - Acacia stenophylla | 3d | 2027-06-12 | 2027-06-14 | A57040, A88420 | 147d |
| A60260 |  | Roadside tree - Hibiscus tiliaceus | 3d | 2027-06-12 | 2027-06-14 | A57040, A88420 | 147d |
| A60270 |  | Roadside tree - Azadirachla indica | 3d | 2027-06-12 | 2027-06-14 | A57040, A88420 | 126d |
|  | 3 | **Miscellaneous Landscaping Items** |  | 2027-06-14 | 2027-07-07 |  |  |
| A60280 |  | Install Precast concrete block paving for sidewalk, mixed grey colour | 21d | 2027-06-14 | 2027-07-07 | A57060, A88420 | 127d |
| A60290 |  | Install Precast concrete block paving for main intrsection, colour light grey | 21d | 2027-06-14 | 2027-07-07 | A57060, A88420 | 127d |
| A60300 |  | install Precast concrete block paving for main intrsection, colour mid grey | 21d | 2027-06-14 | 2027-07-07 | A57060, A88420 | 127d |
| A60310 |  | install Precast concrete block paving for main intrsection, colour dark grey | 21d | 2027-06-14 | 2027-07-07 | A57060, A88420 | 127d |
| A60320 |  | Gravel, mixed dark beige + medium beige + light beige | 21d | 2027-06-14 | 2027-07-07 | A57060, A88420 | 127d |
| A60330 |  | Concrete heel kerb | 21d | 2027-06-14 | 2027-07-07 | A57060, A88420 | 127d |
|  | 1 | **Ground Cover And Shrubs** |  | 2027-06-15 | 2027-07-08 |  |  |
| A60180 |  | Lantana montevidensis | 21d | 2027-06-15 | 2027-07-08 | A60270, A88420 | 126d |
| A60190 |  | Portulaca grandiflora | 21d | 2027-06-15 | 2027-07-08 | A60270, A88420 | 126d |
| A60200 |  | Dodonaea viscosa | 21d | 2027-06-15 | 2027-07-08 | A60270, A88420 | 126d |
| A60210 |  | Atriplex halimus | 21d | 2027-06-15 | 2027-07-08 | A60270, A88420 | 126d |
|  | 5 | **Road 5** |  | 2027-06-07 | 2027-07-25 |  |  |
|  | 2 | **Trees/ Palms** |  | 2027-06-07 | 2027-06-30 |  |  |
| A60380 |  | Roadside tree - Cordia sebestena | 21d | 2027-06-07 | 2027-06-30 | A57180, A88420 | 133d |
| A60390 |  | Roadside tree - Parkinsonia aculeata | 21d | 2027-06-07 | 2027-06-30 | A57180, A88420 | 133d |
| A60400 |  | Roadside tree - Dalbergia sissoo | 21d | 2027-06-07 | 2027-06-30 | A57180, A88420 | 133d |
| A60410 |  | Roadside tree - Acacia stenophylla | 21d | 2027-06-07 | 2027-06-30 | A57180, A88420 | 133d |
| A60420 |  | Roadside tree - Hibiscus tiliaceus | 21d | 2027-06-07 | 2027-06-30 | A57180, A88420 | 133d |
| A60430 |  | Roadside tree - Azadirachla indica | 21d | 2027-06-07 | 2027-06-30 | A57180, A88420 | 112d |
|  | 3 | **Miscellaneous Landscaping Items** |  | 2027-06-09 | 2027-07-03 |  |  |
| A60440 |  | Install Precast concrete block paving for sidewalk, mixed grey colour | 21d | 2027-06-09 | 2027-07-03 | A57200, A88420 | 131d |
| A60450 |  | Install Precast concrete block paving for main intrsection, colour light grey | 21d | 2027-06-09 | 2027-07-03 | A57200, A88420 | 131d |
| A60460 |  | install Precast concrete block paving for main intrsection, colour mid grey | 21d | 2027-06-09 | 2027-07-03 | A57200, A88420 | 131d |
| A60470 |  | install Precast concrete block paving for main intrsection, colour dark grey | 21d | 2027-06-09 | 2027-07-03 | A57200, A88420 | 131d |
| A60480 |  | Gravel, mixed dark beige + medium beige + light beige | 21d | 2027-06-09 | 2027-07-03 | A57200, A88420 | 131d |
| A60490 |  | Concrete heel kerb | 21d | 2027-06-09 | 2027-07-03 | A57200, A88420 | 131d |
|  | 1 | **Ground Cover And Shrubs** |  | 2027-07-01 | 2027-07-25 |  |  |
| A60340 |  | Lantana montevidensis | 21d | 2027-07-01 | 2027-07-25 | A60430, A88420 | 112d |
| A60350 |  | Portulaca grandiflora | 21d | 2027-07-01 | 2027-07-25 | A60430, A88420 | 112d |
| A60360 |  | Dodonaea viscosa | 21d | 2027-07-01 | 2027-07-25 | A60430, A88420 | 112d |
| A60370 |  | Atriplex halimus | 21d | 2027-07-01 | 2027-07-25 | A60430, A88420 | 112d |
|  | 6 | **Road 6** |  | 2027-06-07 | 2027-07-25 |  |  |
|  | 2 | **Trees/ Palms** |  | 2027-06-07 | 2027-06-30 |  |  |
| A60540 |  | Roadside tree - Cordia sebestena | 21d | 2027-06-07 | 2027-06-30 | A57320, A88420 | 133d |
| A60550 |  | Roadside tree - Parkinsonia aculeata | 21d | 2027-06-07 | 2027-06-30 | A57320, A88420 | 133d |
| A60560 |  | Roadside tree - Dalbergia sissoo | 21d | 2027-06-07 | 2027-06-30 | A57320, A88420 | 133d |
| A60570 |  | Roadside tree - Acacia stenophylla | 21d | 2027-06-07 | 2027-06-30 | A57320, A88420 | 133d |
| A60580 |  | Roadside tree - Hibiscus tiliaceus | 21d | 2027-06-07 | 2027-06-30 | A57320, A88420 | 133d |
| A60590 |  | Roadside tree - Azadirachla indica | 21d | 2027-06-07 | 2027-06-30 | A57320, A88420 | 112d |
|  | 3 | **Miscellaneous Landscaping Items** |  | 2027-06-09 | 2027-07-03 |  |  |
| A60600 |  | Install Precast concrete block paving for sidewalk, mixed grey colour | 21d | 2027-06-09 | 2027-07-03 | A57340, A88420 | 131d |
| A60610 |  | Install Precast concrete block paving for main intrsection, colour light grey | 21d | 2027-06-09 | 2027-07-03 | A57340, A88420 | 131d |
| A60620 |  | install Precast concrete block paving for main intrsection, colour mid grey | 21d | 2027-06-09 | 2027-07-03 | A57340, A88420 | 131d |
| A60630 |  | install Precast concrete block paving for main intrsection, colour dark grey | 21d | 2027-06-09 | 2027-07-03 | A57340, A88420 | 131d |
| A60640 |  | Gravel, mixed dark beige + medium beige + light beige | 21d | 2027-06-09 | 2027-07-03 | A57340, A88420 | 131d |
| A60650 |  | Concrete heel kerb | 21d | 2027-06-09 | 2027-07-03 | A57340, A88420 | 131d |
|  | 1 | **Ground Cover And Shrubs** |  | 2027-07-01 | 2027-07-25 |  |  |
| A60500 |  | Lantana montevidensis | 21d | 2027-07-01 | 2027-07-25 | A60590, A88420 | 112d |
| A60510 |  | Portulaca grandiflora | 21d | 2027-07-01 | 2027-07-25 | A60590, A88420 | 112d |
| A60520 |  | Dodonaea viscosa | 21d | 2027-07-01 | 2027-07-25 | A60590, A88420 | 112d |

| ID | WBS | Task | Duration | Start | Finish | Predecessors | Total float |
| --- | --- | --- | --- | --- | --- | --- | --- |
| A60530 |  | Atriplex halimus | 21d | 2027-07-01 | 2027-07-25 | A60590, A88420 | 112d |
|  | 7 | **Road 7** |  | 2027-06-07 | 2027-07-25 |  |  |
|  | 2 | **Trees/ Palms** |  | 2027-06-07 | 2027-06-30 |  |  |
| A60700 |  | Roadside tree - Cordia sebestena | 21d | 2027-06-07 | 2027-06-30 | A57460, A88420 | 133d |
| A60710 |  | Roadside tree - Parkinsonia aculeata | 21d | 2027-06-07 | 2027-06-30 | A57460, A88420 | 133d |
| A60720 |  | Roadside tree - Dalbergia sissoo | 21d | 2027-06-07 | 2027-06-30 | A57460, A88420 | 133d |
| A60730 |  | Roadside tree - Acacia stenophylla | 21d | 2027-06-07 | 2027-06-30 | A57460, A88420 | 133d |
| A60740 |  | Roadside tree - Hibiscus tiliaceus | 21d | 2027-06-07 | 2027-06-30 | A57460, A88420 | 133d |
| A60750 |  | Roadside tree - Azadirachla indica | 21d | 2027-06-07 | 2027-06-30 | A57460, A88420 | 112d |
|  | 3 | **Miscellaneous Landscaping Items** |  | 2027-06-09 | 2027-07-03 |  |  |
| A60760 |  | Install Precast concrete block paving for sidewalk, mixed grey colour | 21d | 2027-06-09 | 2027-07-03 | A57480, A88420 | 131d |
| A60770 |  | Install Precast concrete block paving for main intrsection, colour light grey | 21d | 2027-06-09 | 2027-07-03 | A57480, A88420 | 131d |
| A60780 |  | install Precast concrete block paving for main intrsection, colour mid grey | 21d | 2027-06-09 | 2027-07-03 | A57480, A88420 | 131d |
| A60790 |  | install Precast concrete block paving for main intrsection, colour dark grey | 21d | 2027-06-09 | 2027-07-03 | A57480, A88420 | 131d |
| A60800 |  | Gravel, mixed dark beige + medium beige + light beige | 21d | 2027-06-09 | 2027-07-03 | A57480, A88420 | 131d |
| A60810 |  | Concrete heel kerb | 21d | 2027-06-09 | 2027-07-03 | A57480, A88420 | 131d |
|  | 1 | **Ground Cover And Shrubs** |  | 2027-07-01 | 2027-07-25 |  |  |
| A60660 |  | Lantana montevidensis | 21d | 2027-07-01 | 2027-07-25 | A60750, A88420 | 112d |
| A60670 |  | Portulaca grandiflora | 21d | 2027-07-01 | 2027-07-25 | A60750, A88420 | 112d |
| A60680 |  | Dodonaea viscosa | 21d | 2027-07-01 | 2027-07-25 | A60750, A88420 | 112d |
| A60690 |  | Atriplex halimus | 21d | 2027-07-01 | 2027-07-25 | A60750, A88420 | 112d |
|  | 8 | **Road 8** |  | 2027-06-07 | 2027-07-25 |  |  |
|  | 2 | **Trees/ Palms** |  | 2027-06-07 | 2027-06-30 |  |  |
| A60860 |  | Roadside tree - Cordia sebestena | 21d | 2027-06-07 | 2027-06-30 | A57600, A88420 | 133d |
| A60870 |  | Roadside tree - Parkinsonia aculeata | 21d | 2027-06-07 | 2027-06-30 | A57600, A88420 | 133d |
| A60880 |  | Roadside tree - Dalbergia sissoo | 21d | 2027-06-07 | 2027-06-30 | A57600, A88420 | 133d |
| A60890 |  | Roadside tree - Acacia stenophylla | 21d | 2027-06-07 | 2027-06-30 | A57600, A88420 | 133d |
| A60900 |  | Roadside tree - Hibiscus tiliaceus | 21d | 2027-06-07 | 2027-06-30 | A57600, A88420 | 133d |
| A60910 |  | Roadside tree - Azadirachla indica | 21d | 2027-06-07 | 2027-06-30 | A57600, A88420 | 112d |
|  | 3 | **Miscellaneous Landscaping Items** |  | 2027-06-09 | 2027-07-03 |  |  |
| A60920 |  | Install Precast concrete block paving for sidewalk, mixed grey colour | 21d | 2027-06-09 | 2027-07-03 | A57620, A88420 | 131d |
| A60930 |  | Install Precast concrete block paving for main intrsection, colour light grey | 21d | 2027-06-09 | 2027-07-03 | A57620, A88420 | 131d |
| A60940 |  | install Precast concrete block paving for main intrsection, colour mid grey | 21d | 2027-06-09 | 2027-07-03 | A57620, A88420 | 131d |
| A60950 |  | install Precast concrete block paving for main intrsection, colour dark grey | 21d | 2027-06-09 | 2027-07-03 | A57620, A88420 | 131d |
| A60960 |  | Gravel, mixed dark beige + medium beige + light beige | 21d | 2027-06-09 | 2027-07-03 | A57620, A88420 | 131d |
| A60970 |  | Concrete heel kerb | 21d | 2027-06-09 | 2027-07-03 | A57620, A88420 | 131d |
|  | 1 | **Ground Cover And Shrubs** |  | 2027-07-01 | 2027-07-25 |  |  |
| A60820 |  | Lantana montevidensis | 21d | 2027-07-01 | 2027-07-25 | A60910, A88420 | 112d |
| A60830 |  | Portulaca grandiflora | 21d | 2027-07-01 | 2027-07-25 | A60910, A88420 | 112d |
| A60840 |  | Dodonaea viscosa | 21d | 2027-07-01 | 2027-07-25 | A60910, A88420 | 112d |
| A60850 |  | Atriplex halimus | 21d | 2027-07-01 | 2027-07-25 | A60910, A88420 | 112d |
|  | 9 | **Road 9** |  | 2027-06-13 | 2027-07-31 |  |  |
|  | 2 | **Trees/ Palms** |  | 2027-06-13 | 2027-07-06 |  |  |
| A61020 |  | Roadside tree - Cordia sebestena | 21d | 2027-06-13 | 2027-07-06 | A57740, A88420 | 128d |
| A61030 |  | Roadside tree - Parkinsonia aculeata | 21d | 2027-06-13 | 2027-07-06 | A57740, A88420 | 128d |
| A61040 |  | Roadside tree - Dalbergia sissoo | 21d | 2027-06-13 | 2027-07-06 | A57740, A88420 | 128d |
| A61050 |  | Roadside tree - Acacia stenophylla | 21d | 2027-06-13 | 2027-07-06 | A57740, A88420 | 128d |
| A61060 |  | Roadside tree - Hibiscus tiliaceus | 21d | 2027-06-13 | 2027-07-06 | A57740, A88420 | 128d |
| A61070 |  | Roadside tree - Azadirachla indica | 21d | 2027-06-13 | 2027-07-06 | A57740, A88420 | 107d |
|  | 3 | **Miscellaneous Landscaping Items** |  | 2027-06-15 | 2027-07-08 |  |  |
| A61080 |  | Install Precast concrete block paving for sidewalk, mixed grey colour | 21d | 2027-06-15 | 2027-07-08 | A57760, A88420 | 126d |
| A61090 |  | Install Precast concrete block paving for main intrsection, colour light grey | 21d | 2027-06-15 | 2027-07-08 | A57760, A88420 | 126d |
| A61100 |  | install Precast concrete block paving for main intrsection, colour mid grey | 21d | 2027-06-15 | 2027-07-08 | A57760, A88420 | 126d |
| A61110 |  | install Precast concrete block paving for main intrsection, colour dark grey | 21d | 2027-06-15 | 2027-07-08 | A57760, A88420 | 126d |
| A61120 |  | Gravel, mixed dark beige + medium beige + light beige | 21d | 2027-06-15 | 2027-07-08 | A57760, A88420 | 126d |
| A61130 |  | Concrete heel kerb | 21d | 2027-06-15 | 2027-07-08 | A57760, A88420 | 126d |
|  | 1 | **Ground Cover And Shrubs** |  | 2027-07-07 | 2027-07-31 |  |  |
| A60980 |  | Lantana montevidensis | 21d | 2027-07-07 | 2027-07-31 | A61070, A88420 | 107d |
| A60990 |  | Portulaca grandiflora | 21d | 2027-07-07 | 2027-07-31 | A61070, A88420 | 107d |
| A61000 |  | Dodonaea viscosa | 21d | 2027-07-07 | 2027-07-31 | A61070, A88420 | 107d |
| A61010 |  | Atriplex halimus | 21d | 2027-07-07 | 2027-07-31 | A61070, A88420 | 107d |
|  | 10 | **Road 10** |  | 2027-06-14 | 2027-08-01 |  |  |
|  | 2 | **Trees/ Palms** |  | 2027-06-14 | 2027-07-07 |  |  |
| A61180 |  | Roadside tree - Cordia sebestena | 21d | 2027-06-14 | 2027-07-07 | A57880, A88420 | 127d |
| A61190 |  | Roadside tree - Parkinsonia aculeata | 21d | 2027-06-14 | 2027-07-07 | A57880, A88420 | 127d |
| A61200 |  | Roadside tree - Dalbergia sissoo | 21d | 2027-06-14 | 2027-07-07 | A57880, A88420 | 127d |
| A61210 |  | Roadside tree - Acacia stenophylla | 21d | 2027-06-14 | 2027-07-07 | A57880, A88420 | 127d |
| A61220 |  | Roadside tree - Hibiscus tiliaceus | 21d | 2027-06-14 | 2027-07-07 | A57880, A88420 | 127d |
| A61230 |  | Roadside tree - Azadirachla indica | 21d | 2027-06-14 | 2027-07-07 | A57880, A88420 | 106d |
|  | 3 | **Miscellaneous Landscaping Items** |  | 2027-06-16 | 2027-07-10 |  |  |

| ID | WBS | Task | Duration | Start | Finish | Predecessors | Total float |
| --- | --- | --- | --- | --- | --- | --- | --- |
| A61240 |  | Install Precast concrete block paving for sidewalk, mixed grey colour | 21d | 2027-06-16 | 2027-07-10 | A57900, A88420 | 125d |
| A61250 |  | Install Precast concrete block paving for main intrsection, colour light grey | 21d | 2027-06-16 | 2027-07-10 | A57900, A88420 | 125d |
| A61260 |  | install Precast concrete block paving for main intrsection, colour mid grey | 21d | 2027-06-16 | 2027-07-10 | A57900, A88420 | 125d |
| A61270 |  | install Precast concrete block paving for main intrsection, colour dark grey | 21d | 2027-06-16 | 2027-07-10 | A57900, A88420 | 125d |
| A61280 |  | Gravel, mixed dark beige + medium beige + light beige | 21d | 2027-06-16 | 2027-07-10 | A57900, A88420 | 125d |
| A61290 |  | Concrete heel kerb | 21d | 2027-06-16 | 2027-07-10 | A57900, A88420 | 125d |
|  | 1 | **Ground Cover And Shrubs** |  | 2027-07-08 | 2027-08-01 |  |  |
| A61140 |  | Lantana montevidensis | 21d | 2027-07-08 | 2027-08-01 | A61230, A88420 | 106d |
| A61150 |  | Portulaca grandiflora | 21d | 2027-07-08 | 2027-08-01 | A61230, A88420 | 106d |
| A61160 |  | Dodonaea viscosa | 21d | 2027-07-08 | 2027-08-01 | A61230, A88420 | 106d |
| A61170 |  | Atriplex halimus | 21d | 2027-07-08 | 2027-08-01 | A61230, A88420 | 106d |
|  | 11 | **Road 11** |  | 2027-06-20 | 2027-08-07 |  |  |
|  | 2 | **Trees/ Palms** |  | 2027-06-20 | 2027-07-13 |  |  |
| A61340 |  | Roadside tree - Cordia sebestena | 21d | 2027-06-20 | 2027-07-13 | A58020, A88420 | 122d |
| A61350 |  | Roadside tree - Parkinsonia aculeata | 21d | 2027-06-20 | 2027-07-13 | A58020, A88420 | 122d |
| A61360 |  | Roadside tree - Dalbergia sissoo | 21d | 2027-06-20 | 2027-07-13 | A58020, A88420 | 122d |
| A61370 |  | Roadside tree - Acacia stenophylla | 21d | 2027-06-20 | 2027-07-13 | A58020, A88420 | 122d |
| A61380 |  | Roadside tree - Hibiscus tiliaceus | 21d | 2027-06-20 | 2027-07-13 | A58020, A88420 | 122d |
| A61390 |  | Roadside tree - Azadirachla indica | 21d | 2027-06-20 | 2027-07-13 | A58020, A88420 | 101d |
|  | 3 | **Miscellaneous Landscaping Items** |  | 2027-06-22 | 2027-07-15 |  |  |
| A61400 |  | Install Precast concrete block paving for sidewalk, mixed grey colour | 21d | 2027-06-22 | 2027-07-15 | A58040, A88420 | 120d |
| A61410 |  | Install Precast concrete block paving for main intrsection, colour light grey | 21d | 2027-06-22 | 2027-07-15 | A58040, A88420 | 120d |
| A61420 |  | install Precast concrete block paving for main intrsection, colour mid grey | 21d | 2027-06-22 | 2027-07-15 | A58040, A88420 | 120d |
| A61430 |  | install Precast concrete block paving for main intrsection, colour dark grey | 21d | 2027-06-22 | 2027-07-15 | A58040, A88420 | 120d |
| A61440 |  | Gravel, mixed dark beige + medium beige + light beige | 21d | 2027-06-22 | 2027-07-15 | A58040, A88420 | 120d |
| A61450 |  | Concrete heel kerb | 21d | 2027-06-22 | 2027-07-15 | A58040, A88420 | 120d |
|  | 1 | **Ground Cover And Shrubs** |  | 2027-07-14 | 2027-08-07 |  |  |
| A61300 |  | Lantana montevidensis | 21d | 2027-07-14 | 2027-08-07 | A61390, A88420 | 101d |
| A61310 |  | Portulaca grandiflora | 21d | 2027-07-14 | 2027-08-07 | A61390, A88420 | 101d |
| A61320 |  | Dodonaea viscosa | 21d | 2027-07-14 | 2027-08-07 | A61390, A88420 | 101d |
| A61330 |  | Atriplex halimus | 21d | 2027-07-14 | 2027-08-07 | A61390, A88420 | 101d |
|  | 12 | **Road 12** |  | 2027-06-23 | 2027-08-10 |  |  |
|  | 2 | **Trees/ Palms** |  | 2027-06-23 | 2027-07-17 |  |  |
| A61500 |  | Roadside tree - Cordia sebestena | 21d | 2027-06-23 | 2027-07-17 | A58160, A88420 | 119d |
| A61510 |  | Roadside tree - Parkinsonia aculeata | 21d | 2027-06-23 | 2027-07-17 | A58160, A88420 | 119d |
| A61520 |  | Roadside tree - Dalbergia sissoo | 21d | 2027-06-23 | 2027-07-17 | A58160, A88420 | 119d |
| A61530 |  | Roadside tree - Acacia stenophylla | 21d | 2027-06-23 | 2027-07-17 | A58160, A88420 | 119d |
| A61540 |  | Roadside tree - Hibiscus tiliaceus | 21d | 2027-06-23 | 2027-07-17 | A58160, A88420 | 119d |
| A61550 |  | Roadside tree - Azadirachla indica | 21d | 2027-06-23 | 2027-07-17 | A58160, A88420 | 98d |
|  | 3 | **Miscellaneous Landscaping Items** |  | 2027-06-26 | 2027-07-19 |  |  |
| A61560 |  | Install Precast concrete block paving for sidewalk, mixed grey colour | 21d | 2027-06-26 | 2027-07-19 | A58180, A88420 | 117d |
| A61570 |  | Install Precast concrete block paving for main intrsection, colour light grey | 21d | 2027-06-26 | 2027-07-19 | A58180, A88420 | 117d |
| A61580 |  | install Precast concrete block paving for main intrsection, colour mid grey | 21d | 2027-06-26 | 2027-07-19 | A58180, A88420 | 117d |
| A61590 |  | install Precast concrete block paving for main intrsection, colour dark grey | 21d | 2027-06-26 | 2027-07-19 | A58180, A88420 | 117d |
| A61600 |  | Gravel, mixed dark beige + medium beige + light beige | 21d | 2027-06-26 | 2027-07-19 | A58180, A88420 | 117d |
| A61610 |  | Concrete heel kerb | 21d | 2027-06-26 | 2027-07-19 | A58180, A88420 | 117d |
|  | 1 | **Ground Cover And Shrubs** |  | 2027-07-18 | 2027-08-10 |  |  |
| A61460 |  | Lantana montevidensis | 21d | 2027-07-18 | 2027-08-10 | A61550, A88420 | 98d |
| A61470 |  | Portulaca grandiflora | 21d | 2027-07-18 | 2027-08-10 | A61550, A88420 | 98d |
| A61480 |  | Dodonaea viscosa | 21d | 2027-07-18 | 2027-08-10 | A61550, A88420 | 98d |
| A61490 |  | Atriplex halimus | 21d | 2027-07-18 | 2027-08-10 | A61550, A88420 | 98d |
|  | 13 | **Road 13** |  | 2027-06-27 | 2027-08-14 |  |  |
|  | 2 | **Trees/ Palms** |  | 2027-06-27 | 2027-07-20 |  |  |
| A61660 |  | Roadside tree - Cordia sebestena | 21d | 2027-06-27 | 2027-07-20 | A58300, A88420 | 116d |
| A61670 |  | Roadside tree - Parkinsonia aculeata | 21d | 2027-06-27 | 2027-07-20 | A58300, A88420 | 116d |
| A61680 |  | Roadside tree - Dalbergia sissoo | 21d | 2027-06-27 | 2027-07-20 | A58300, A88420 | 116d |
| A61690 |  | Roadside tree - Acacia stenophylla | 21d | 2027-06-27 | 2027-07-20 | A58300, A88420 | 116d |
| A61700 |  | Roadside tree - Hibiscus tiliaceus | 21d | 2027-06-27 | 2027-07-20 | A58300, A88420 | 116d |
| A61710 |  | Roadside tree - Azadirachla indica | 21d | 2027-06-27 | 2027-07-20 | A58300, A88420 | 95d |
|  | 3 | **Miscellaneous Landscaping Items** |  | 2027-06-29 | 2027-07-22 |  |  |
| A61720 |  | Install Precast concrete block paving for sidewalk, mixed grey colour | 21d | 2027-06-29 | 2027-07-22 | A58320, A88420 | 114d |
| A61730 |  | Install Precast concrete block paving for main intrsection, colour light grey | 21d | 2027-06-29 | 2027-07-22 | A58320, A88420 | 114d |
| A61740 |  | install Precast concrete block paving for main intrsection, colour mid grey | 21d | 2027-06-29 | 2027-07-22 | A58320, A88420 | 114d |
| A61750 |  | install Precast concrete block paving for main intrsection, colour dark grey | 21d | 2027-06-29 | 2027-07-22 | A58320, A88420 | 114d |
| A61760 |  | Gravel, mixed dark beige + medium beige + light beige | 21d | 2027-06-29 | 2027-07-22 | A58320, A88420 | 114d |
| A61770 |  | Concrete heel kerb | 21d | 2027-06-29 | 2027-07-22 | A58320, A88420 | 114d |
|  | 1 | **Ground Cover And Shrubs** |  | 2027-07-21 | 2027-08-14 |  |  |
| A61620 |  | Lantana montevidensis | 21d | 2027-07-21 | 2027-08-14 | A61710, A88420 | 95d |
| A61630 |  | Portulaca grandiflora | 21d | 2027-07-21 | 2027-08-14 | A61710, A88420 | 95d |
| A61640 |  | Dodonaea viscosa | 21d | 2027-07-21 | 2027-08-14 | A61710, A88420 | 95d |

| ID | WBS | Task | Duration | Start | Finish | Predecessors | Total float |
| --- | --- | --- | --- | --- | --- | --- | --- |
| A61650 |  | Atriplex halimus | 21d | 2027-07-21 | 2027-08-14 | A61710, A88420 | 95d |
|  | 14 | **Road 14** |  | 2027-06-30 | 2027-08-17 |  |  |
|  | 2 | **Trees/ Palms** |  | 2027-06-30 | 2027-07-24 |  |  |
| A61820 |  | Roadside tree - Cordia sebestena | 21d | 2027-06-30 | 2027-07-24 | A58440, A88420 | 113d |
| A61830 |  | Roadside tree - Parkinsonia aculeata | 21d | 2027-06-30 | 2027-07-24 | A58440, A88420 | 113d |
| A61840 |  | Roadside tree - Dalbergia sissoo | 21d | 2027-06-30 | 2027-07-24 | A58440, A88420 | 113d |
| A61850 |  | Roadside tree - Acacia stenophylla | 21d | 2027-06-30 | 2027-07-24 | A58440, A88420 | 113d |
| A61860 |  | Roadside tree - Hibiscus tiliaceus | 21d | 2027-06-30 | 2027-07-24 | A58440, A88420 | 113d |
| A61870 |  | Roadside tree - Azadirachla indica | 21d | 2027-06-30 | 2027-07-24 | A58440, A88420 | 92d |
|  | 3 | **Miscellaneous Landscaping Items** |  | 2027-07-03 | 2027-07-26 |  |  |
| A61880 |  | Install Precast concrete block paving for sidewalk, mixed grey colour | 21d | 2027-07-03 | 2027-07-26 | A58460, A88420 | 111d |
| A61890 |  | Install Precast concrete block paving for main intrsection, colour light grey | 21d | 2027-07-03 | 2027-07-26 | A58460, A88420 | 111d |
| A61900 |  | install Precast concrete block paving for main intrsection, colour mid grey | 21d | 2027-07-03 | 2027-07-26 | A58460, A88420 | 111d |
| A61910 |  | install Precast concrete block paving for main intrsection, colour dark grey | 21d | 2027-07-03 | 2027-07-26 | A58460, A88420 | 111d |
| A61920 |  | Gravel, mixed dark beige + medium beige + light beige | 21d | 2027-07-03 | 2027-07-26 | A58460, A88420 | 111d |
| A61930 |  | Concrete heel kerb | 21d | 2027-07-03 | 2027-07-26 | A58460, A88420 | 111d |
|  | 1 | **Ground Cover And Shrubs** |  | 2027-07-25 | 2027-08-17 |  |  |
| A61780 |  | Lantana montevidensis | 21d | 2027-07-25 | 2027-08-17 | A61870, A88420 | 92d |
| A61790 |  | Portulaca grandiflora | 21d | 2027-07-25 | 2027-08-17 | A61870, A88420 | 92d |
| A61800 |  | Dodonaea viscosa | 21d | 2027-07-25 | 2027-08-17 | A61870, A88420 | 92d |
| A61810 |  | Atriplex halimus | 21d | 2027-07-25 | 2027-08-17 | A61870, A88420 | 92d |
|  | 15 | **Road 15** |  | 2027-07-04 | 2027-08-21 |  |  |
|  | 2 | **Trees/ Palms** |  | 2027-07-04 | 2027-07-27 |  |  |
| A61980 |  | Roadside tree - Cordia sebestena | 21d | 2027-07-04 | 2027-07-27 | A58580, A88420 | 110d |
| A61990 |  | Roadside tree - Parkinsonia aculeata | 21d | 2027-07-04 | 2027-07-27 | A58580, A88420 | 110d |
| A62000 |  | Roadside tree - Dalbergia sissoo | 21d | 2027-07-04 | 2027-07-27 | A58580, A88420 | 110d |
| A62010 |  | Roadside tree - Acacia stenophylla | 21d | 2027-07-04 | 2027-07-27 | A58580, A88420 | 110d |
| A62020 |  | Roadside tree - Hibiscus tiliaceus | 21d | 2027-07-04 | 2027-07-27 | A58580, A88420 | 110d |
| A62030 |  | Roadside tree - Azadirachla indica | 21d | 2027-07-04 | 2027-07-27 | A58580, A88420 | 89d |
|  | 3 | **Miscellaneous Landscaping Items** |  | 2027-07-06 | 2027-07-29 |  |  |
| A62040 |  | Install Precast concrete block paving for sidewalk, mixed grey colour | 21d | 2027-07-06 | 2027-07-29 | A58600, A88420 | 108d |
| A62050 |  | Install Precast concrete block paving for main intrsection, colour light grey | 21d | 2027-07-06 | 2027-07-29 | A58600, A88420 | 108d |
| A62060 |  | install Precast concrete block paving for main intrsection, colour mid grey | 21d | 2027-07-06 | 2027-07-29 | A58600, A88420 | 108d |
| A62070 |  | install Precast concrete block paving for main intrsection, colour dark grey | 21d | 2027-07-06 | 2027-07-29 | A58600, A88420 | 108d |
| A62080 |  | Gravel, mixed dark beige + medium beige + light beige | 21d | 2027-07-06 | 2027-07-29 | A58600, A88420 | 108d |
| A62090 |  | Concrete heel kerb | 21d | 2027-07-06 | 2027-07-29 | A58600, A88420 | 108d |
|  | 1 | **Ground Cover And Shrubs** |  | 2027-07-28 | 2027-08-21 |  |  |
| A61940 |  | Lantana montevidensis | 21d | 2027-07-28 | 2027-08-21 | A62030, A88420 | 89d |
| A61950 |  | Portulaca grandiflora | 21d | 2027-07-28 | 2027-08-21 | A62030, A88420 | 89d |
| A61960 |  | Dodonaea viscosa | 21d | 2027-07-28 | 2027-08-21 | A62030, A88420 | 89d |
| A61970 |  | Atriplex halimus | 21d | 2027-07-28 | 2027-08-21 | A62030, A88420 | 89d |
|  | 16 | **Road 16** |  | 2027-07-06 | 2027-08-23 |  |  |
|  | 2 | **Trees/ Palms** |  | 2027-07-06 | 2027-07-29 |  |  |
| A62140 |  | Roadside tree - Cordia sebestena | 21d | 2027-07-06 | 2027-07-29 | A58720, A88420 | 108d |
| A62150 |  | Roadside tree - Parkinsonia aculeata | 21d | 2027-07-06 | 2027-07-29 | A58720, A88420 | 108d |
| A62160 |  | Roadside tree - Dalbergia sissoo | 21d | 2027-07-06 | 2027-07-29 | A58720, A88420 | 108d |
| A62170 |  | Roadside tree - Acacia stenophylla | 21d | 2027-07-06 | 2027-07-29 | A58720, A88420 | 108d |
| A62180 |  | Roadside tree - Hibiscus tiliaceus | 21d | 2027-07-06 | 2027-07-29 | A58720, A88420 | 108d |
| A62190 |  | Roadside tree - Azadirachla indica | 21d | 2027-07-06 | 2027-07-29 | A58720, A88420 | 87d |
|  | 3 | **Miscellaneous Landscaping Items** |  | 2027-07-08 | 2027-08-01 |  |  |
| A62200 |  | Install Precast concrete block paving for sidewalk, mixed grey colour | 21d | 2027-07-08 | 2027-08-01 | A58740, A88420 | 106d |
| A62210 |  | Install Precast concrete block paving for main intrsection, colour light grey | 21d | 2027-07-08 | 2027-08-01 | A58740, A88420 | 106d |
| A62220 |  | install Precast concrete block paving for main intrsection, colour mid grey | 21d | 2027-07-08 | 2027-08-01 | A58740, A88420 | 106d |
| A62230 |  | install Precast concrete block paving for main intrsection, colour dark grey | 21d | 2027-07-08 | 2027-08-01 | A58740, A88420 | 106d |
| A62240 |  | Gravel, mixed dark beige + medium beige + light beige | 21d | 2027-07-08 | 2027-08-01 | A58740, A88420 | 106d |
| A62250 |  | Concrete heel kerb | 21d | 2027-07-08 | 2027-08-01 | A58740, A88420 | 106d |
|  | 1 | **Ground Cover And Shrubs** |  | 2027-07-31 | 2027-08-23 |  |  |
| A62100 |  | Lantana montevidensis | 21d | 2027-07-31 | 2027-08-23 | A62190, A88420 | 87d |
| A62110 |  | Portulaca grandiflora | 21d | 2027-07-31 | 2027-08-23 | A62190, A88420 | 87d |
| A62120 |  | Dodonaea viscosa | 21d | 2027-07-31 | 2027-08-23 | A62190, A88420 | 87d |
| A62130 |  | Atriplex halimus | 21d | 2027-07-31 | 2027-08-23 | A62190, A88420 | 87d |
|  | 17 | **Road 17** |  | 2027-07-08 | 2027-08-28 |  |  |
|  | 2 | **Trees/ Palms** |  | 2027-07-08 | 2027-08-03 |  |  |
| A62300 |  | Roadside tree - Cordia sebestena | 21d | 2027-07-08 | 2027-08-01 | A58860, A88420 | 106d |
| A62310 |  | Roadside tree - Parkinsonia aculeata | 21d | 2027-07-08 | 2027-08-01 | A58860, A88420 | 106d |
| A62320 |  | Roadside tree - Dalbergia sissoo | 21d | 2027-07-08 | 2027-08-01 | A58860, A88420 | 106d |
| A62330 |  | Roadside tree - Acacia stenophylla | 21d | 2027-07-08 | 2027-08-01 | A58860, A88420 | 106d |
| A62340 |  | Roadside tree - Hibiscus tiliaceus | 21d | 2027-07-08 | 2027-08-01 | A58860, A88420 | 106d |
| A62350 |  | Roadside tree - Azadirachla indica | 21d | 2027-07-11 | 2027-08-03 | A58860, A58880, A88420 | 83d |
|  | 3 | **Miscellaneous Landscaping Items** |  | 2027-07-11 | 2027-08-03 |  |  |

| ID | WBS | Task | Duration | Start | Finish | Predecessors | Total float |
| --- | --- | --- | --- | --- | --- | --- | --- |
| A62360 |  | Install Precast concrete block paving for sidewalk, mixed grey colour | 21d | 2027-07-11 | 2027-08-03 | A58880, A88420 | 104d |
| A62370 |  | Install Precast concrete block paving for main intrsection, colour light grey | 21d | 2027-07-11 | 2027-08-03 | A58880, A88420 | 104d |
| A62380 |  | install Precast concrete block paving for main intrsection, colour mid grey | 21d | 2027-07-11 | 2027-08-03 | A58880, A88420 | 104d |
| A62390 |  | install Precast concrete block paving for main intrsection, colour dark grey | 21d | 2027-07-11 | 2027-08-03 | A58880, A88420 | 104d |
| A62400 |  | Gravel, mixed dark beige + medium beige + light beige | 21d | 2027-07-11 | 2027-08-03 | A58880, A88420 | 104d |
| A62410 |  | Concrete heel kerb | 21d | 2027-07-11 | 2027-08-03 | A58880, A88420 | 104d |
|  | 1 | **Ground Cover And Shrubs** |  | 2027-08-04 | 2027-08-28 |  |  |
| A62260 |  | Lantana montevidensis | 21d | 2027-08-04 | 2027-08-28 | A62350, A88420 | 83d |
| A62270 |  | Portulaca grandiflora | 21d | 2027-08-04 | 2027-08-28 | A62350, A88420 | 83d |
| A62280 |  | Dodonaea viscosa | 21d | 2027-08-04 | 2027-08-28 | A62350, A88420 | 83d |
| A62290 |  | Atriplex halimus | 21d | 2027-08-04 | 2027-08-28 | A62350, A88420 | 83d |
|  | CO1 | **Collector 1** |  | 2027-08-01 | 2027-09-18 |  |  |
|  | 2 | **Trees/ Palms** |  | 2027-08-01 | 2027-08-24 |  |  |
| A62460 |  | Roadside tree - Cordia sebestena | 21d | 2027-08-01 | 2027-08-24 | A59000, A88420 | 86d |
| A62470 |  | Roadside tree - Parkinsonia aculeata | 21d | 2027-08-01 | 2027-08-24 | A59000, A88420 | 86d |
| A62480 |  | Roadside tree - Dalbergia sissoo | 21d | 2027-08-01 | 2027-08-24 | A59000, A88420 | 86d |
| A62490 |  | Roadside tree - Acacia stenophylla | 21d | 2027-08-01 | 2027-08-24 | A59000, A88420 | 86d |
| A62500 |  | Roadside tree - Hibiscus tiliaceus | 21d | 2027-08-01 | 2027-08-24 | A59000, A88420 | 86d |
| A62510 |  | Roadside tree - Azadirachla indica | 21d | 2027-08-01 | 2027-08-24 | A59000, A88420 | 65d |
|  | 3 | **Miscellaneous Landscaping Items** |  | 2027-08-05 | 2027-08-29 |  |  |
| A62520 |  | Install Precast concrete block paving for sidewalk, mixed grey colour | 21d | 2027-08-05 | 2027-08-29 | A59020, A88420 | 82d |
| A62530 |  | Install Precast concrete block paving for main intrsection, colour light grey | 21d | 2027-08-05 | 2027-08-29 | A59020, A88420 | 82d |
| A62540 |  | install Precast concrete block paving for main intrsection, colour mid grey | 21d | 2027-08-05 | 2027-08-29 | A59020, A88420 | 82d |
| A62550 |  | install Precast concrete block paving for main intrsection, colour dark grey | 21d | 2027-08-05 | 2027-08-29 | A59020, A88420 | 82d |
| A62560 |  | Gravel, mixed dark beige + medium beige + light beige | 21d | 2027-08-05 | 2027-08-29 | A59020, A88420 | 82d |
| A62570 |  | Concrete heel kerb | 21d | 2027-08-05 | 2027-08-29 | A59020, A88420 | 82d |
|  | 1 | **Ground Cover And Shrubs** |  | 2027-08-25 | 2027-09-18 |  |  |
| A62420 |  | Lantana montevidensis | 21d | 2027-08-25 | 2027-09-18 | A62510, A88420 | 65d |
| A62430 |  | Portulaca grandiflora | 21d | 2027-08-25 | 2027-09-18 | A62510, A88420 | 65d |
| A62440 |  | Dodonaea viscosa | 21d | 2027-08-25 | 2027-09-18 | A62510, A88420 | 65d |
| A62450 |  | Atriplex halimus | 21d | 2027-08-25 | 2027-09-18 | A62510, A88420 | 65d |
|  | Zone B | **Zone B** |  | 2026-01-03 | 2027-12-01 |  |  |
|  | PREP | **EARTH WORK** |  | 2026-01-03 | 2026-04-02 |  |  |
|  | R18 | **Road 18** |  | 2026-01-03 | 2026-01-28 |  |  |
|  | EW | **Earth Work** |  | 2026-01-03 | 2026-01-28 |  |  |
| A62720 |  | Earthworks - Cut Excavation | 4d | 2026-01-03 | 2026-01-06 | A1010 | 0d |
| A62730 |  | Earthworks - Fill & Compaction | 14d | 2026-01-07 | 2026-01-22 | A62720 | 125d |
| A62740 |  | Subgrade | 5d | 2026-01-24 | 2026-01-28 | A62730, A2930, A2940, A2950, A2960, A2970, A2980, A2990 | 154d |
|  | R19 | **Road 19** |  | 2026-01-07 | 2026-01-28 |  |  |
|  | EW | **Earth Work** |  | 2026-01-07 | 2026-01-28 |  |  |
| A64350 |  | Earthworks - Cut Excavation | 4d | 2026-01-07 | 2026-01-11 | A62720 | 0d |
| A64360 |  | Earthworks - Fill & Compaction | 10d | 2026-01-12 | 2026-01-22 | A64350 | 157d |
| A64370 |  | Subgrade | 5d | 2026-01-24 | 2026-01-28 | A64360 | 157d |
|  | R20 | **Road 20** |  | 2026-01-12 | 2026-01-27 |  |  |
|  | EW | **Earth Work** |  | 2026-01-12 | 2026-01-27 |  |  |
| A64380 |  | Earthworks - Cut Excavation | 4d | 2026-01-12 | 2026-01-15 | A64350 | 0d |
| A64390 |  | Earthworks - Fill & Compaction | 5d | 2026-01-17 | 2026-01-21 | A64380 | 162d |
| A64400 |  | Subgrade | 5d | 2026-01-22 | 2026-01-27 | A64390 | 162d |
|  | R21 | **Road 21** |  | 2026-01-17 | 2026-02-01 |  |  |
|  | EW | **Earth Work** |  | 2026-01-17 | 2026-02-01 |  |  |
| A64410 |  | Earthworks - Cut Excavation | 4d | 2026-01-17 | 2026-01-20 | A64380 | 0d |
| A64420 |  | Earthworks - Fill & Compaction | 5d | 2026-01-21 | 2026-01-26 | A64410 | 161d |
| A64430 |  | Subgrade | 5d | 2026-01-27 | 2026-02-01 | A64420 | 161d |
|  | R22 | **Road 22** |  | 2026-01-21 | 2026-02-05 |  |  |
|  | EW | **Earth Work** |  | 2026-01-21 | 2026-02-05 |  |  |
| A64440 |  | Earthworks - Cut Excavation | 4d | 2026-01-21 | 2026-01-25 | A64410 | 0d |
| A64450 |  | Earthworks - Fill & Compaction | 5d | 2026-01-26 | 2026-01-31 | A64440 | 132d |
| A64460 |  | Subgrade | 5d | 2026-02-01 | 2026-02-05 | A64450 | 160d |
|  | R23 | **Road 23** |  | 2026-01-26 | 2026-02-10 |  |  |
|  | EW | **Earth Work** |  | 2026-01-26 | 2026-02-10 |  |  |
| A64470 |  | Earthworks - Cut Excavation | 4d | 2026-01-26 | 2026-01-29 | A64440 | 0d |
| A64480 |  | Earthworks - Fill & Compaction | 5d | 2026-01-31 | 2026-02-04 | A64470 | 142d |
| A64490 |  | Subgrade | 5d | 2026-02-05 | 2026-02-10 | A64480 | 159d |
|  | R24 | **Road 24** |  | 2026-01-31 | 2026-02-15 |  |  |
|  | EW | **Earth Work** |  | 2026-01-31 | 2026-02-15 |  |  |
| A64500 |  | Earthworks - Cut Excavation | 4d | 2026-01-31 | 2026-02-03 | A64470 | 0d |
| A64510 |  | Earthworks - Fill & Compaction | 5d | 2026-02-04 | 2026-02-09 | A64500 | 106d |
| A64520 |  | Subgrade | 5d | 2026-02-10 | 2026-02-15 | A64510 | 158d |
|  | R25 | **Road 25** |  | 2026-02-04 | 2026-02-19 |  |  |
|  | EW | **Earth Work** |  | 2026-02-04 | 2026-02-19 |  |  |

| ID | WBS | Task | Duration | Start | Finish | Predecessors | Total float |
| --- | --- | --- | --- | --- | --- | --- | --- |
| A64530 |  | Earthworks - Cut Excavation | 4d | 2026-02-04 | 2026-02-08 | A64500 | 0d |
| A64540 |  | Earthworks - Fill & Compaction | 5d | 2026-02-09 | 2026-02-14 | A64530 | 0d |
| A64550 |  | Subgrade | 5d | 2026-02-15 | 2026-02-19 | A64540 | 157d |
|  | R26 | **Road 26** |  | 2026-02-09 | 2026-02-24 |  |  |
|  | EW | **Earth Work** |  | 2026-02-09 | 2026-02-24 |  |  |
| A66630 |  | Earthworks - Cut Excavation | 4d | 2026-02-09 | 2026-02-12 | A64530 | 5d |
| A66640 |  | Earthworks - Fill & Compaction | 5d | 2026-02-14 | 2026-02-18 | A66630 | 69d |
| A66650 |  | Subgrade | 5d | 2026-02-19 | 2026-02-24 | A66640 | 156d |
|  | R27 | **Road 27** |  | 2026-02-14 | 2026-02-28 |  |  |
|  | EW | **Earth Work** |  | 2026-02-14 | 2026-02-28 |  |  |
| A66660 |  | Earthworks - Cut Excavation | 4d | 2026-02-14 | 2026-02-17 | A66630 | 5d |
| A66670 |  | Earthworks - Fill & Compaction | 4d | 2026-02-18 | 2026-02-22 | A66660 | 5d |
| A66680 |  | Subgrade | 5d | 2026-02-23 | 2026-02-28 | A66670 | 156d |
|  | CO2 | **Collector 2** |  | 2026-02-18 | 2026-03-15 |  |  |
|  | EW | **Earth Work** |  | 2026-02-18 | 2026-03-15 |  |  |
| A64560 |  | Earthworks - Cut Excavation | 8d | 2026-02-18 | 2026-02-26 | A66660 | 49d |
| A64570 |  | Earthworks - Fill & Compaction | 8d | 2026-02-28 | 2026-03-08 | A64560 | 49d |
| A64580 |  | Subgrade | 6d | 2026-03-09 | 2026-03-15 | A64570 | 146d |
|  | AR1 | **Areterial 1** |  | 2026-02-28 | 2026-03-16 |  |  |
|  | EW | **Earth Work** |  | 2026-02-28 | 2026-03-16 |  |  |
| A64590 |  | Earthworks - Cut Excavation | 5d | 2026-02-28 | 2026-03-04 | A64560 | 80d |
| A64600 |  | Earthworks - Fill & Compaction | 5d | 2026-03-05 | 2026-03-10 | A64590 | 89d |
| A64610 |  | Subgrade | 5d | 2026-03-11 | 2026-03-16 | A64600 | 162d |
|  | AR2 | **Areterial 2** |  | 2026-03-05 | 2026-03-22 |  |  |
|  | EW | **Earth Work** |  | 2026-03-05 | 2026-03-22 |  |  |
| A64620 |  | Earthworks - Cut Excavation | 5d | 2026-03-05 | 2026-03-10 | A64590 | 80d |
| A64630 |  | Earthworks - Fill & Compaction | 5d | 2026-03-11 | 2026-03-16 | A64620 | 80d |
| A64640 |  | Subgrade | 5d | 2026-03-17 | 2026-03-22 | A64630 | 162d |
|  | AR21 | **ROUND ABOUT 1** |  | 2026-03-11 | 2026-03-28 |  |  |
|  | EW | **Earth Work** |  | 2026-03-11 | 2026-03-28 |  |  |
| A66690 |  | Earthworks - Cut Excavation | 5d | 2026-03-11 | 2026-03-16 | A64620 | 156d |
| A66700 |  | Earthworks - Fill & Compaction | 5d | 2026-03-17 | 2026-03-22 | A66690 | 156d |
| A66710 |  | Subgrade | 5d | 2026-03-23 | 2026-03-28 | A66700 | 156d |
|  | AR211 | **ROUND ABOUT 2** |  | 2026-03-17 | 2026-04-02 |  |  |
|  | EW | **Earth Work** |  | 2026-03-17 | 2026-04-02 |  |  |
| A66720 |  | Earthworks - Cut Excavation | 5d | 2026-03-17 | 2026-03-22 | A66690 | 156d |
| A66730 |  | Earthworks - Fill & Compaction | 5d | 2026-03-23 | 2026-03-28 | A66720 | 156d |
| A66740 |  | Subgrade | 5d | 2026-03-29 | 2026-04-02 | A66730, A66710 | 156d |
|  | 2 | **STORM NETWORK** |  | 2026-01-22 | 2027-01-12 |  |  |
|  | EX LR 01 | **EX LR 01** |  | 2026-03-28 | 2026-11-21 |  |  |
|  | MH-A31 /MH-A32 | **MH-A31 /MH-A32** |  | 2026-03-28 | 2026-08-22 |  |  |
| A79580 |  | Excavation | 4d | 2026-03-28 | 2026-03-31 | A78680 | 5d |
| A79600 |  | Install Manhole | 4d | 2026-04-26 | 2026-04-29 | A79580, A10240 | 90d |
| A79590 |  | Pipe Laying | 21d | 2026-07-15 | 2026-08-08 | A79580, A58200 | 2d |
| A79610 |  | Testing & Inspection | 2d | 2026-08-09 | 2026-08-10 | A79590 | 2d |
| A79620 |  | Backfilling & Compaction | 10d | 2026-08-11 | 2026-08-22 | A79610, A79600 | 2d |
|  | MH-A32 /MH-A33 | **MH-A32 /MH-A33** |  | 2026-08-23 | 2026-10-04 |  |  |
| A81680 |  | Excavation | 4d | 2026-08-23 | 2026-08-26 | A79620 | 2d |
| A81690 |  | Pipe Laying | 21d | 2026-08-27 | 2026-09-20 | A81680 | 45d |
| A81700 |  | Install Manhole | 4d | 2026-08-27 | 2026-08-31 | A81680, A10240 | 64d |
| A81710 |  | Testing & Inspection | 2d | 2026-09-21 | 2026-09-22 | A81690 | 45d |
| A81720 |  | Backfilling & Compaction | 10d | 2026-09-23 | 2026-10-04 | A81710, A81700, A79620 | 45d |
|  | MH-A33 /MH-A34 | **MH-A33 /MH-A34** |  | 2026-10-05 | 2026-11-16 |  |  |
| A81630 |  | Excavation | 4d | 2026-10-05 | 2026-10-08 | A81720 | 45d |
| A81640 |  | Pipe Laying | 21d | 2026-10-10 | 2026-11-02 | A81630 | 45d |
| A81650 |  | Install Manhole | 4d | 2026-10-10 | 2026-10-13 | A81630, A10240 | 64d |
| A81660 |  | Testing & Inspection | 2d | 2026-11-03 | 2026-11-04 | A81640 | 45d |
| A81670 |  | Backfilling & Compaction | 10d | 2026-11-05 | 2026-11-16 | A81660, A81650, A81720 | 45d |
|  | MH-A34 /MH-A35 | **MH-A34 /MH-A35** |  | 2026-10-10 | 2026-11-21 |  |  |
| A81580 |  | Excavation | 4d | 2026-10-10 | 2026-10-13 | A81630 | 51d |
| A81590 |  | Pipe Laying | 21d | 2026-10-14 | 2026-11-07 | A81580 | 51d |
| A81600 |  | Install Manhole | 4d | 2026-10-14 | 2026-10-18 | A81580, A10240 | 70d |
| A81610 |  | Testing & Inspection | 2d | 2026-11-08 | 2026-11-09 | A81590 | 51d |
| A81620 |  | Backfilling & Compaction | 4d | 2026-11-17 | 2026-11-21 | A81610, A81600, A81670 | 45d |
|  | A R R-1 | **A R R-1** |  | 2026-03-11 | 2027-01-10 |  |  |
|  | MH-0-Q /MH-11-Q | **MH-0-Q /MH-11-Q** |  | 2026-03-11 | 2026-05-11 |  |  |
| A68030 |  | Excavation | 4d | 2026-03-11 | 2026-03-15 | A64590, A64600, A1890 | 89d |
| A68040 |  | Pipe Laying | 4d | 2026-03-16 | 2026-03-19 | A68030 | 89d |
| A68060 |  | Testing & Inspection | 2d | 2026-03-21 | 2026-03-22 | A68040 | 89d |
| A68050 |  | Install Manhole | 4d | 2026-04-26 | 2026-04-29 | A68030, A10240 | 56d |

| ID | WBS | Task | Duration | Start | Finish | Predecessors | Total float |
| --- | --- | --- | --- | --- | --- | --- | --- |
| A68070 |  | Backfilling & Compaction | 10d | 2026-04-30 | 2026-05-11 | A68060, A68050 | 56d |
|  | MH-11-Q /MH-11-Q-1 | **MH-11-Q /MH-11-Q-1** |  | 2026-08-27 | 2026-10-08 |  |  |
| A67980 |  | Excavation | 4d | 2026-08-27 | 2026-08-31 | A68030, A1890, A81680 | 2d |
| A67990 |  | Pipe Laying | 21d | 2026-09-01 | 2026-09-24 | A67980 | 2d |
| A68000 |  | Install Manhole | 4d | 2026-09-01 | 2026-09-05 | A67980, A10240 | 21d |
| A68010 |  | Testing & Inspection | 2d | 2026-09-26 | 2026-09-27 | A67990 | 2d |
| A68020 |  | Backfilling & Compaction | 10d | 2026-09-28 | 2026-10-08 | A68010, A68000, A68070 | 2d |
|  | MH-11-Q-1 /MH-11-Q-2 | **MH-11-Q-1 /MH-11-Q-2** |  | 2026-09-01 | 2026-10-20 |  |  |
| A67930 |  | Excavation | 4d | 2026-09-01 | 2026-09-05 | A67980, A1890 | 8d |
| A67940 |  | Pipe Laying | 21d | 2026-09-06 | 2026-09-29 | A67930 | 8d |
| A67950 |  | Install Manhole | 4d | 2026-09-06 | 2026-09-09 | A67930, A10240 | 27d |
| A67960 |  | Testing & Inspection | 2d | 2026-09-30 | 2026-10-01 | A67940 | 8d |
| A67970 |  | Backfilling & Compaction | 10d | 2026-10-10 | 2026-10-20 | A67960, A67950, A68020 | 2d |
|  | MH-11-Q-2 /MH-11-Q-3 | **MH-11-Q-2 /MH-11-Q-3** |  | 2026-09-06 | 2026-11-01 |  |  |
| A67880 |  | Excavation | 4d | 2026-09-06 | 2026-09-09 | A67930, A1890 | 14d |
| A67890 |  | Pipe Laying | 21d | 2026-09-10 | 2026-10-04 | A67880 | 14d |
| A67900 |  | Install Manhole | 4d | 2026-09-10 | 2026-09-14 | A67880, A10240 | 33d |
| A67910 |  | Testing & Inspection | 2d | 2026-10-05 | 2026-10-06 | A67890 | 14d |
| A67920 |  | Backfilling & Compaction | 10d | 2026-10-21 | 2026-11-01 | A67910, A67900, A67970 | 2d |
|  | MH-11-Q-3 /MH-11-Q-4 | **MH-11-Q-3 /MH-11-Q-4** |  | 2026-09-10 | 2026-11-12 |  |  |
| A67830 |  | Excavation | 4d | 2026-09-10 | 2026-09-14 | A67880, A1890 | 20d |
| A67840 |  | Pipe Laying | 21d | 2026-09-15 | 2026-10-08 | A67830 | 20d |
| A67850 |  | Install Manhole | 4d | 2026-09-15 | 2026-09-19 | A67830, A10240 | 39d |
| A67860 |  | Testing & Inspection | 2d | 2026-10-10 | 2026-10-11 | A67840 | 20d |
| A67870 |  | Backfilling & Compaction | 10d | 2026-11-02 | 2026-11-12 | A67860, A67850, A67920 | 2d |
|  | MH-11-Q-4 /MH-11-Q-5 | **MH-11-Q-4 /MH-11-Q-5** |  | 2026-09-15 | 2026-11-24 |  |  |
| A67780 |  | Excavation | 4d | 2026-09-15 | 2026-09-19 | A67830, A1890 | 26d |
| A67790 |  | Pipe Laying | 21d | 2026-09-20 | 2026-10-13 | A67780 | 26d |
| A67800 |  | Install Manhole | 4d | 2026-09-20 | 2026-09-23 | A67780, A10240 | 45d |
| A67810 |  | Testing & Inspection | 2d | 2026-10-14 | 2026-10-15 | A67790 | 26d |
| A67820 |  | Backfilling & Compaction | 10d | 2026-11-14 | 2026-11-24 | A67810, A67800, A67870 | 2d |
|  | MH-11-Q-5 /MH-11-Q-6 | **MH-11-Q-5 /MH-11-Q-6** |  | 2026-09-20 | 2026-12-06 |  |  |
| A67730 |  | Excavation | 4d | 2026-09-20 | 2026-09-23 | A67780, A1890 | 32d |
| A67740 |  | Pipe Laying | 21d | 2026-09-24 | 2026-10-18 | A67730 | 32d |
| A67750 |  | Install Manhole | 4d | 2026-09-24 | 2026-09-28 | A67730, A10240 | 51d |
| A67760 |  | Testing & Inspection | 2d | 2026-10-19 | 2026-10-20 | A67740 | 32d |
| A67770 |  | Backfilling & Compaction | 10d | 2026-11-25 | 2026-12-06 | A67760, A67750, A67820 | 2d |
|  | MH-11-Q-6 /MH-11-Q-7 | **MH-11-Q-6 /MH-11-Q-7** |  | 2026-09-24 | 2026-12-17 |  |  |
| A67680 |  | Excavation | 4d | 2026-09-24 | 2026-09-28 | A67730, A1890 | 38d |
| A67690 |  | Pipe Laying | 21d | 2026-09-29 | 2026-10-22 | A67680 | 38d |
| A67700 |  | Install Manhole | 4d | 2026-09-29 | 2026-10-03 | A67680, A10240 | 57d |
| A67710 |  | Testing & Inspection | 2d | 2026-10-24 | 2026-10-25 | A67690 | 38d |
| A67720 |  | Backfilling & Compaction | 10d | 2026-12-07 | 2026-12-17 | A67710, A67700, A67770 | 2d |
|  | MH-11-Q-7 /MH-11-Q-8 | **MH-11-Q-7 /MH-11-Q-8** |  | 2026-09-29 | 2026-12-29 |  |  |
| A67630 |  | Excavation | 4d | 2026-09-29 | 2026-10-03 | A67680, A1890 | 44d |
| A67640 |  | Pipe Laying | 21d | 2026-10-04 | 2026-10-27 | A67630 | 44d |
| A67650 |  | Install Manhole | 4d | 2026-10-04 | 2026-10-07 | A67630, A10240 | 63d |
| A67660 |  | Testing & Inspection | 2d | 2026-10-28 | 2026-10-29 | A67640 | 44d |
| A67670 |  | Backfilling & Compaction | 10d | 2026-12-19 | 2026-12-29 | A67660, A67650, A67720 | 2d |
|  | MH-11-Q-8 /MH-11-Q-9 | **MH-11-Q-8 /MH-11-Q-9** |  | 2026-10-04 | 2027-01-10 |  |  |
| A67580 |  | Excavation | 4d | 2026-10-04 | 2026-10-07 | A67630, A1890 | 50d |
| A67590 |  | Pipe Laying | 21d | 2026-10-08 | 2026-11-01 | A67580 | 50d |
| A67600 |  | Install Manhole | 4d | 2026-10-08 | 2026-10-12 | A67580, A10240 | 69d |
| A67610 |  | Testing & Inspection | 2d | 2026-11-02 | 2026-11-03 | A67590 | 50d |
| A67620 |  | Backfilling & Compaction | 10d | 2026-12-30 | 2027-01-10 | A67610, A67600, A67670 | 2d |
|  | EX LR 02 | **EX LR 02** |  | 2026-04-01 | 2027-01-12 |  |  |
|  | O-A /MH-1A | **O-A /MH-1A** |  | 2026-04-06 | 2026-05-16 |  |  |
| A81430 |  | Excavation | 4d | 2026-04-06 | 2026-04-09 | A81380 | 8d |
| A81440 |  | Pipe Laying | 14d | 2026-04-11 | 2026-04-26 | A81430 | 8d |
| A81450 |  | Install Manhole | 4d | 2026-04-26 | 2026-04-29 | A81430, A10240 | 7d |
| A81460 |  | Testing & Inspection | 2d | 2026-04-27 | 2026-04-28 | A81440 | 8d |
| A81470 |  | Backfilling & Compaction | 7d | 2026-05-09 | 2026-05-16 | A81460, A81450, A81420 | 0d |
|  | MH-1A /MH-2A | **MH-1A /MH-2A** |  | 2026-04-11 | 2026-05-24 |  |  |
| A81480 |  | Excavation | 4d | 2026-04-11 | 2026-04-14 | A81430 | 11d |
| A81490 |  | Pipe Laying | 14d | 2026-04-15 | 2026-04-30 | A81480 | 11d |
| A81500 |  | Install Manhole | 4d | 2026-04-26 | 2026-04-29 | A81480, A10240 | 14d |
| A81510 |  | Testing & Inspection | 2d | 2026-05-02 | 2026-05-03 | A81490 | 11d |
| A81520 |  | Backfilling & Compaction | 7d | 2026-05-17 | 2026-05-24 | A81510, A81500, A81470 | 0d |
|  | MH-2A /MH-3 A | **MH-2A /MH-3 A** |  | 2026-04-15 | 2026-06-01 |  |  |
| A81530 |  | Excavation | 4d | 2026-04-15 | 2026-04-19 | A81480 | 14d |

| ID | WBS | Task | Duration | Start | Finish | Predecessors | Total float |
| --- | --- | --- | --- | --- | --- | --- | --- |
| A81540 |  | Pipe Laying | 14d | 2026-04-20 | 2026-05-05 | A81530 | 14d |
| A81550 |  | Install Manhole | 4d | 2026-04-26 | 2026-04-29 | A81530, A10240 | 21d |
| A81560 |  | Testing & Inspection | 2d | 2026-05-06 | 2026-05-07 | A81540 | 14d |
| A81570 |  | Backfilling & Compaction | 7d | 2026-05-25 | 2026-06-01 | A81560, A81550, A81520 | 0d |
|  | MH-3 A /MH-4 | **MH-3 A /MH-4** |  | 2026-04-20 | 2026-06-09 |  |  |
| A81330 |  | Excavation | 4d | 2026-04-20 | 2026-04-23 | A81530 | 17d |
| A81340 |  | Pipe Laying | 14d | 2026-04-25 | 2026-05-10 | A81330 | 17d |
| A81350 |  | Install Manhole | 4d | 2026-04-26 | 2026-04-29 | A81330, A10240 | 28d |
| A81360 |  | Testing & Inspection | 2d | 2026-05-11 | 2026-05-12 | A81340 | 17d |
| A81370 |  | Backfilling & Compaction | 7d | 2026-06-02 | 2026-06-09 | A81360, A81350, A81570 | 0d |
|  | MH-A10 /MH-A11 | **MH-A10 /MH-A11** |  | 2026-05-23 | 2026-08-02 |  |  |
| A80980 |  | Excavation | 4d | 2026-05-23 | 2026-05-26 | A81030 | 35d |
| A80990 |  | Pipe Laying | 14d | 2026-05-27 | 2026-06-11 | A80980 | 35d |
| A81000 |  | Install Manhole | 4d | 2026-05-27 | 2026-05-31 | A80980, A10240 | 47d |
| A81010 |  | Testing & Inspection | 2d | 2026-06-13 | 2026-06-14 | A80990 | 35d |
| A81020 |  | Backfilling & Compaction | 7d | 2026-07-26 | 2026-08-02 | A81010, A81000, A81070 | 0d |
|  | MH-A11 /MH-A12 | **MH-A11 /MH-A12** |  | 2026-05-27 | 2026-08-10 |  |  |
| A80930 |  | Excavation | 4d | 2026-05-27 | 2026-05-31 | A80980 | 38d |
| A80940 |  | Pipe Laying | 14d | 2026-06-01 | 2026-06-16 | A80930 | 38d |
| A80950 |  | Install Manhole | 4d | 2026-06-01 | 2026-06-04 | A80930, A10240 | 50d |
| A80960 |  | Testing & Inspection | 2d | 2026-06-17 | 2026-06-18 | A80940 | 38d |
| A80970 |  | Backfilling & Compaction | 7d | 2026-08-03 | 2026-08-10 | A80960, A80950, A81020 | 0d |
|  | MH-A12 /MH-A13 | **MH-A12 /MH-A13** |  | 2026-06-01 | 2026-08-18 |  |  |
| A80880 |  | Excavation | 4d | 2026-06-01 | 2026-06-04 | A80930 | 41d |
| A80890 |  | Pipe Laying | 14d | 2026-06-06 | 2026-06-21 | A80880 | 41d |
| A80900 |  | Install Manhole | 4d | 2026-06-06 | 2026-06-09 | A80880, A10240 | 53d |
| A80910 |  | Testing & Inspection | 2d | 2026-06-22 | 2026-06-23 | A80890 | 41d |
| A80920 |  | Backfilling & Compaction | 7d | 2026-08-11 | 2026-08-18 | A80910, A80900, A80970 | 0d |
|  | MH-A13 /MH-A14 | **MH-A13 /MH-A14** |  | 2026-06-06 | 2026-08-26 |  |  |
| A80830 |  | Excavation | 4d | 2026-06-06 | 2026-06-09 | A80880 | 44d |
| A80840 |  | Pipe Laying | 14d | 2026-06-10 | 2026-06-25 | A80830 | 44d |
| A80850 |  | Install Manhole | 4d | 2026-06-10 | 2026-06-14 | A80830, A10240 | 56d |
| A80860 |  | Testing & Inspection | 2d | 2026-06-27 | 2026-06-28 | A80840 | 44d |
| A80870 |  | Backfilling & Compaction | 7d | 2026-08-19 | 2026-08-26 | A80860, A80850, A80920 | 0d |
|  | MH-A14 /MH-A15 | **MH-A14 /MH-A15** |  | 2026-06-10 | 2026-09-03 |  |  |
| A80780 |  | Excavation | 4d | 2026-06-10 | 2026-06-14 | A80830 | 47d |
| A80790 |  | Pipe Laying | 14d | 2026-06-15 | 2026-06-30 | A80780 | 47d |
| A80800 |  | Install Manhole | 4d | 2026-06-15 | 2026-06-18 | A80780, A10240 | 59d |
| A80810 |  | Testing & Inspection | 2d | 2026-07-01 | 2026-07-02 | A80790 | 47d |
| A80820 |  | Backfilling & Compaction | 7d | 2026-08-27 | 2026-09-03 | A80810, A80800, A80870 | 0d |
|  | MH-A15 /MH-A16 | **MH-A15 /MH-A16** |  | 2026-06-15 | 2026-09-12 |  |  |
| A80730 |  | Excavation | 4d | 2026-06-15 | 2026-06-18 | A80780 | 50d |
| A80740 |  | Pipe Laying | 14d | 2026-06-20 | 2026-07-05 | A80730 | 50d |
| A80750 |  | Install Manhole | 4d | 2026-06-20 | 2026-06-23 | A80730, A10240 | 62d |
| A80760 |  | Testing & Inspection | 2d | 2026-07-06 | 2026-07-07 | A80740 | 50d |
| A80770 |  | Backfilling & Compaction | 7d | 2026-09-05 | 2026-09-12 | A80760, A80750, A80820 | 0d |
|  | MH-A16 /MH-A17 | **MH-A16 /MH-A17** |  | 2026-06-20 | 2026-09-20 |  |  |
| A80680 |  | Excavation | 4d | 2026-06-20 | 2026-06-23 | A80730 | 53d |
| A80690 |  | Pipe Laying | 14d | 2026-06-24 | 2026-07-09 | A80680 | 53d |
| A80700 |  | Install Manhole | 4d | 2026-06-24 | 2026-06-28 | A80680, A10240 | 65d |
| A80710 |  | Testing & Inspection | 2d | 2026-07-11 | 2026-07-12 | A80690 | 53d |
| A80720 |  | Backfilling & Compaction | 7d | 2026-09-13 | 2026-09-20 | A80710, A80700, A80770 | 0d |
|  | MH-A17 /MH-A18 | **MH-A17 /MH-A18** |  | 2026-06-24 | 2026-09-28 |  |  |
| A80630 |  | Excavation | 4d | 2026-06-24 | 2026-06-28 | A80680 | 56d |
| A80640 |  | Pipe Laying | 14d | 2026-06-29 | 2026-07-14 | A80630 | 56d |
| A80650 |  | Install Manhole | 4d | 2026-06-29 | 2026-07-02 | A80630, A10240 | 68d |
| A80660 |  | Testing & Inspection | 2d | 2026-07-15 | 2026-07-16 | A80640 | 56d |
| A80670 |  | Backfilling & Compaction | 7d | 2026-09-21 | 2026-09-28 | A80660, A80650, A80720 | 0d |
|  | MH-A18 /MH-A19 | **MH-A18 /MH-A19** |  | 2026-06-29 | 2026-10-06 |  |  |
| A80580 |  | Excavation | 4d | 2026-06-29 | 2026-07-02 | A80630 | 59d |
| A80590 |  | Pipe Laying | 14d | 2026-07-04 | 2026-07-19 | A80580 | 59d |
| A80600 |  | Install Manhole | 4d | 2026-07-04 | 2026-07-07 | A80580, A10240 | 71d |
| A80610 |  | Testing & Inspection | 2d | 2026-07-20 | 2026-07-21 | A80590 | 59d |
| A80620 |  | Backfilling & Compaction | 7d | 2026-09-29 | 2026-10-06 | A80610, A80600, A80670 | 0d |
|  | MH-A19 /MH-A20 | **MH-A19 /MH-A20** |  | 2026-07-04 | 2026-10-14 |  |  |
| A80530 |  | Excavation | 4d | 2026-07-04 | 2026-07-07 | A80580 | 62d |
| A80540 |  | Pipe Laying | 14d | 2026-07-08 | 2026-07-23 | A80530 | 62d |
| A80550 |  | Install Manhole | 4d | 2026-07-08 | 2026-07-12 | A80530, A10240 | 74d |
| A80560 |  | Testing & Inspection | 2d | 2026-07-25 | 2026-07-26 | A80540 | 62d |
| A80570 |  | Backfilling & Compaction | 7d | 2026-10-07 | 2026-10-14 | A80560, A80550, A80620 | 0d |

| ID | WBS | Task | Duration | Start | Finish | Predecessors | Total float |
| --- | --- | --- | --- | --- | --- | --- | --- |
|  | MH-A20 /MH-A21 | **MH-A20 /MH-A21** |  | 2026-07-08 | 2026-10-22 |  |  |
| A80480 |  | Excavation | 4d | 2026-07-08 | 2026-07-12 | A80530 | 65d |
| A80490 |  | Pipe Laying | 14d | 2026-07-13 | 2026-07-28 | A80480 | 65d |
| A80500 |  | Install Manhole | 4d | 2026-07-13 | 2026-07-16 | A80480, A10240 | 77d |
| A80510 |  | Testing & Inspection | 2d | 2026-07-29 | 2026-07-30 | A80490 | 65d |
| A80520 |  | Backfilling & Compaction | 7d | 2026-10-15 | 2026-10-22 | A80510, A80500, A80570 | 0d |
|  | MH-A21 /MH-A22 | **MH-A21 /MH-A22** |  | 2026-07-13 | 2026-10-31 |  |  |
| A80430 |  | Excavation | 4d | 2026-07-13 | 2026-07-16 | A80480 | 68d |
| A80440 |  | Pipe Laying | 14d | 2026-07-18 | 2026-08-02 | A80430 | 68d |
| A80450 |  | Install Manhole | 4d | 2026-07-18 | 2026-07-21 | A80430, A10240 | 80d |
| A80460 |  | Testing & Inspection | 2d | 2026-08-03 | 2026-08-04 | A80440 | 68d |
| A80470 |  | Backfilling & Compaction | 7d | 2026-10-24 | 2026-10-31 | A80460, A80450, A80520 | 0d |
|  | MH-A22 /MH-A23 | **MH-A22 /MH-A23** |  | 2026-07-18 | 2026-11-08 |  |  |
| A80380 |  | Excavation | 4d | 2026-07-18 | 2026-07-21 | A80430 | 71d |
| A80390 |  | Pipe Laying | 14d | 2026-07-22 | 2026-08-06 | A80380 | 71d |
| A80400 |  | Install Manhole | 4d | 2026-07-22 | 2026-07-26 | A80380, A10240 | 83d |
| A80410 |  | Testing & Inspection | 2d | 2026-08-08 | 2026-08-09 | A80390 | 71d |
| A80420 |  | Backfilling & Compaction | 7d | 2026-11-01 | 2026-11-08 | A80410, A80400, A80470 | 0d |
|  | MH-A23 /MH-A24 | **MH-A23 /MH-A24** |  | 2026-07-22 | 2026-11-16 |  |  |
| A80330 |  | Excavation | 4d | 2026-07-22 | 2026-07-26 | A80380 | 74d |
| A80340 |  | Pipe Laying | 14d | 2026-07-27 | 2026-08-11 | A80330 | 74d |
| A80350 |  | Install Manhole | 4d | 2026-07-27 | 2026-07-30 | A80330, A10240 | 86d |
| A80360 |  | Testing & Inspection | 2d | 2026-08-12 | 2026-08-13 | A80340 | 74d |
| A80370 |  | Backfilling & Compaction | 7d | 2026-11-09 | 2026-11-16 | A80360, A80350, A80420 | 0d |
|  | MH-A24 /MH-A25 | **MH-A24 /MH-A25** |  | 2026-07-27 | 2026-11-24 |  |  |
| A80280 |  | Excavation | 4d | 2026-07-27 | 2026-07-30 | A80330 | 77d |
| A80290 |  | Pipe Laying | 14d | 2026-08-01 | 2026-08-16 | A80280 | 77d |
| A80300 |  | Install Manhole | 4d | 2026-08-01 | 2026-08-04 | A80280 | 89d |
| A80310 |  | Testing & Inspection | 2d | 2026-08-17 | 2026-08-18 | A80290 | 77d |
| A80320 |  | Backfilling & Compaction | 7d | 2026-11-17 | 2026-11-24 | A80310, A80300, A80370 | 0d |
|  | MH-A25 /MH-A26 | **MH-A25 /MH-A26** |  | 2026-08-01 | 2026-12-02 |  |  |
| A80230 |  | Excavation | 4d | 2026-08-01 | 2026-08-04 | A80280 | 80d |
| A80240 |  | Pipe Laying | 14d | 2026-08-05 | 2026-08-20 | A80230 | 80d |
| A80250 |  | Install Manhole | 4d | 2026-08-05 | 2026-08-09 | A80230 | 92d |
| A80260 |  | Testing & Inspection | 2d | 2026-08-22 | 2026-08-23 | A80240 | 80d |
| A80270 |  | Backfilling & Compaction | 7d | 2026-11-25 | 2026-12-02 | A80260, A80250, A80320 | 0d |
|  | MH-A26 /MH-A27 | **MH-A26 /MH-A27** |  | 2026-08-05 | 2026-12-10 |  |  |
| A80180 |  | Excavation | 4d | 2026-08-05 | 2026-08-09 | A80230 | 83d |
| A80190 |  | Pipe Laying | 14d | 2026-08-10 | 2026-08-25 | A80180 | 83d |
| A80200 |  | Install Manhole | 4d | 2026-08-10 | 2026-08-13 | A80180 | 95d |
| A80210 |  | Testing & Inspection | 2d | 2026-08-26 | 2026-08-27 | A80190 | 83d |
| A80220 |  | Backfilling & Compaction | 7d | 2026-12-03 | 2026-12-10 | A80210, A80200, A80270 | 0d |
|  | MH-A27 /MH-A28 | **MH-A27 /MH-A28** |  | 2026-08-10 | 2026-12-19 |  |  |
| A80130 |  | Excavation | 4d | 2026-08-10 | 2026-08-13 | A80180 | 86d |
| A80140 |  | Pipe Laying | 14d | 2026-08-15 | 2026-08-30 | A80130 | 86d |
| A80150 |  | Install Manhole | 4d | 2026-08-15 | 2026-08-18 | A80130 | 98d |
| A80160 |  | Testing & Inspection | 2d | 2026-08-31 | 2026-09-01 | A80140 | 86d |
| A80170 |  | Backfilling & Compaction | 7d | 2026-12-12 | 2026-12-19 | A80160, A80150, A80220 | 0d |
|  | MH-A28 /MH-A29 | **MH-A28 /MH-A29** |  | 2026-08-15 | 2026-12-27 |  |  |
| A80080 |  | Excavation | 4d | 2026-08-15 | 2026-08-18 | A80130 | 89d |
| A80090 |  | Pipe Laying | 14d | 2026-08-19 | 2026-09-03 | A80080 | 89d |
| A80100 |  | Install Manhole | 4d | 2026-08-19 | 2026-08-23 | A80080 | 101d |
| A80110 |  | Testing & Inspection | 2d | 2026-09-05 | 2026-09-06 | A80090 | 89d |
| A80120 |  | Backfilling & Compaction | 7d | 2026-12-20 | 2026-12-27 | A80110, A80100, A80170 | 0d |
|  | MH-A29 /MH-A30 | **MH-A29 /MH-A30** |  | 2026-08-19 | 2027-01-04 |  |  |
| A80030 |  | Excavation | 4d | 2026-08-19 | 2026-08-23 | A80080 | 92d |
| A80040 |  | Pipe Laying | 14d | 2026-08-24 | 2026-09-08 | A80030 | 92d |
| A80050 |  | Install Manhole | 4d | 2026-08-24 | 2026-08-27 | A80030 | 104d |
| A80060 |  | Testing & Inspection | 2d | 2026-09-09 | 2026-09-10 | A80040 | 92d |
| A80070 |  | Backfilling & Compaction | 7d | 2026-12-28 | 2027-01-04 | A80060, A80050, A80120 | 0d |
|  | MH-A30 /MH-A31 | **MH-A30 /MH-A31** |  | 2026-08-24 | 2027-01-12 |  |  |
| A79980 |  | Excavation | 4d | 2026-08-24 | 2026-08-27 | A80030 | 95d |
| A79990 |  | Pipe Laying | 14d | 2026-08-29 | 2026-09-13 | A79980 | 95d |
| A80000 |  | Install Manhole | 4d | 2026-08-29 | 2026-09-01 | A79980 | 107d |
| A80010 |  | Testing & Inspection | 2d | 2026-09-14 | 2026-09-15 | A79990 | 95d |
| A80020 |  | Backfilling & Compaction | 7d | 2027-01-05 | 2027-01-12 | A80010, A80000, A80070 | 0d |
|  | MH-A4 /MH-A5 | **MH-A4 /MH-A5** |  | 2026-04-25 | 2026-06-17 |  |  |
| A81280 |  | Excavation | 4d | 2026-04-25 | 2026-04-28 | A81330 | 20d |
| A81290 |  | Pipe Laying | 14d | 2026-04-29 | 2026-05-14 | A81280 | 20d |
| A81300 |  | Install Manhole | 4d | 2026-04-29 | 2026-05-03 | A81280, A10240 | 32d |

| ID | WBS | Task | Duration | Start | Finish | Predecessors | Total float |
| --- | --- | --- | --- | --- | --- | --- | --- |
| A81310 |  | Testing & Inspection | 2d | 2026-05-16 | 2026-05-17 | A81290 | 20d |
| A81320 |  | Backfilling & Compaction | 7d | 2026-06-10 | 2026-06-17 | A81310, A81300, A81370 | 0d |
|  | MH-A5 /MH-A6 | **MH-A5 /MH-A6** |  | 2026-04-29 | 2026-06-25 |  |  |
| A81230 |  | Excavation | 4d | 2026-04-29 | 2026-05-03 | A81280 | 23d |
| A81240 |  | Pipe Laying | 14d | 2026-05-04 | 2026-05-19 | A81230 | 23d |
| A81250 |  | Install Manhole | 4d | 2026-05-04 | 2026-05-07 | A81230, A10240 | 35d |
| A81260 |  | Testing & Inspection | 2d | 2026-05-20 | 2026-05-21 | A81240 | 23d |
| A81270 |  | Backfilling & Compaction | 7d | 2026-06-18 | 2026-06-25 | A81260, A81250, A81320 | 0d |
|  | MH-A6 /MH-A7 | **MH-A6 /MH-A7** |  | 2026-05-04 | 2026-06-30 |  |  |
| A81180 |  | Excavation | 4d | 2026-05-04 | 2026-05-07 | A81230 | 26d |
| A81190 |  | Pipe Laying | 14d | 2026-05-09 | 2026-05-24 | A81180 | 26d |
| A81200 |  | Install Manhole | 4d | 2026-05-09 | 2026-05-12 | A81180, A10240 | 38d |
| A81210 |  | Testing & Inspection | 2d | 2026-05-25 | 2026-05-26 | A81190 | 26d |
| A81220 |  | Backfilling & Compaction | 4d | 2026-06-27 | 2026-06-30 | A81210, A81200, A81270 | 0d |
|  | MH-A7 /MH-A8 | **MH-A7 /MH-A8** |  | 2026-05-09 | 2026-07-08 |  |  |
| A81130 |  | Excavation | 4d | 2026-05-09 | 2026-05-12 | A81180 | 26d |
| A81140 |  | Pipe Laying | 14d | 2026-05-13 | 2026-05-28 | A81130 | 26d |
| A81150 |  | Install Manhole | 4d | 2026-05-13 | 2026-05-17 | A81130, A10240 | 38d |
| A81160 |  | Testing & Inspection | 2d | 2026-05-30 | 2026-05-31 | A81140 | 26d |
| A81170 |  | Backfilling & Compaction | 7d | 2026-07-01 | 2026-07-08 | A81160, A81150, A81220 | 0d |
|  | MH-A8 /MH-A9 | **MH-A8 /MH-A9** |  | 2026-05-13 | 2026-07-16 |  |  |
| A81080 |  | Excavation | 4d | 2026-05-13 | 2026-05-17 | A81130 | 32d |
| A81090 |  | Pipe Laying | 4d | 2026-05-18 | 2026-05-21 | A81080 | 39d |
| A81100 |  | Install Manhole | 4d | 2026-05-18 | 2026-05-21 | A81080, A10240 | 41d |
| A81110 |  | Testing & Inspection | 2d | 2026-05-23 | 2026-05-24 | A81090 | 39d |
| A81120 |  | Backfilling & Compaction | 7d | 2026-07-09 | 2026-07-16 | A81110, A81100, A81170 | 0d |
|  | MH-A9 /MH-A10 | **MH-A9 /MH-A10** |  | 2026-05-18 | 2026-07-25 |  |  |
| A81030 |  | Excavation | 4d | 2026-05-18 | 2026-05-21 | A81080 | 32d |
| A81040 |  | Pipe Laying | 14d | 2026-05-23 | 2026-06-07 | A81030 | 32d |
| A81050 |  | Install Manhole | 4d | 2026-05-23 | 2026-05-26 | A81030, A10240 | 44d |
| A81060 |  | Testing & Inspection | 2d | 2026-06-08 | 2026-06-09 | A81040 | 32d |
| A81070 |  | Backfilling & Compaction | 7d | 2026-07-18 | 2026-07-25 | A81060, A81050, A81120 | 0d |
|  | TIN IN TOMH 1.1 | **TIN IN TOMH 1.1** |  | 2026-04-01 | 2026-05-07 |  |  |
| A81380 |  | Excavation | 4d | 2026-04-01 | 2026-04-05 | A79580 | 5d |
| A81390 |  | Pipe Laying | 14d | 2026-04-06 | 2026-04-21 | A81380 | 5d |
| A81410 |  | Testing & Inspection | 2d | 2026-04-22 | 2026-04-23 | A81390 | 5d |
| A81400 |  | Install Manhole | 4d | 2026-04-26 | 2026-04-29 | A81380, A10240 | 0d |
| A81420 |  | Backfilling & Compaction | 7d | 2026-04-30 | 2026-05-07 | A81410, A81400 | 0d |
|  | COLLECTOR ROAD | **COLLECTOR ROAD** |  | 2026-03-09 | 2026-11-29 |  |  |
|  | CU-01 | **CU-01** |  | 2026-10-03 | 2026-11-29 |  |  |
| A92760 |  | Excavation - Box Culverts | 4d | 2026-10-03 | 2026-10-06 | A78230, A63920, A63500 | 38d |
| A92770 |  | Foundation works | 10d | 2026-10-07 | 2026-10-18 | A92760 | 38d |
| A92780 |  | Walls & Slabs works | 14d | 2026-10-19 | 2026-11-03 | A92770 | 38d |
| A92790 |  | Wing walls and approach slab works | 12d | 2026-11-04 | 2026-11-17 | A92780 | 38d |
| A92800 |  | Waterproofing for Culverts | 4d | 2026-11-04 | 2026-11-08 | A92780 | 46d |
| A92810 |  | Riprap for culvert inlet and outlet slope protection | 10d | 2026-11-18 | 2026-11-29 | A92790, A92800 | 38d |
|  | CU-02 | **CU-02** |  | 2026-10-03 | 2026-11-29 |  |  |
| A93120 |  | Excavation - Box Culverts | 4d | 2026-10-03 | 2026-10-06 | A78230, A63500 | 38d |
| A93130 |  | Foundation works | 10d | 2026-10-07 | 2026-10-18 | A93120 | 38d |
| A93140 |  | Walls & Slabs works | 14d | 2026-10-19 | 2026-11-03 | A93130 | 38d |
| A93150 |  | Waterproofing for Culverts | 4d | 2026-11-04 | 2026-11-08 | A93140 | 46d |
| A93160 |  | Wing walls and approach slab works | 12d | 2026-11-04 | 2026-11-17 | A93140 | 38d |
| A93170 |  | Riprap for culvert inlet and outlet slope protection | 10d | 2026-11-18 | 2026-11-29 | A93160, A93150 | 38d |
|  | CU-03 | **CU-03** |  | 2026-10-03 | 2026-11-29 |  |  |
| A93060 |  | Excavation - Box Culverts | 4d | 2026-10-03 | 2026-10-06 | A78230, A63500 | 38d |
| A93070 |  | Foundation works | 10d | 2026-10-07 | 2026-10-18 | A93060 | 38d |
| A93080 |  | Walls & Slabs works | 14d | 2026-10-19 | 2026-11-03 | A93070 | 38d |
| A93090 |  | Waterproofing for Culverts | 4d | 2026-11-04 | 2026-11-08 | A93080 | 46d |
| A93100 |  | Wing walls and approach slab works | 12d | 2026-11-04 | 2026-11-17 | A93080 | 38d |
| A93110 |  | Riprap for culvert inlet and outlet slope protection | 10d | 2026-11-18 | 2026-11-29 | A93100, A93090 | 38d |
|  | CU-04 | **CU-04** |  | 2026-10-03 | 2026-11-29 |  |  |
| A93000 |  | Excavation - Box Culverts | 4d | 2026-10-03 | 2026-10-06 | A78230, A63500 | 38d |
| A93010 |  | Foundation works | 10d | 2026-10-07 | 2026-10-18 | A93000 | 38d |
| A93020 |  | Walls & Slabs works | 14d | 2026-10-19 | 2026-11-03 | A93010 | 38d |
| A93030 |  | Waterproofing for Culverts | 4d | 2026-11-04 | 2026-11-08 | A93020 | 46d |
| A93040 |  | Wing walls and approach slab works | 12d | 2026-11-04 | 2026-11-17 | A93020 | 38d |
| A93050 |  | Riprap for culvert inlet and outlet slope protection | 10d | 2026-11-18 | 2026-11-29 | A93040, A93030 | 38d |
|  | CU-05 | **CU-05** |  | 2026-10-03 | 2026-11-29 |  |  |
| A92940 |  | Excavation - Box Culverts | 4d | 2026-10-03 | 2026-10-06 | A78230, A63500 | 38d |
| A92950 |  | Foundation works | 10d | 2026-10-07 | 2026-10-18 | A92940 | 38d |

| ID | WBS | Task | Duration | Start | Finish | Predecessors | Total float |
| --- | --- | --- | --- | --- | --- | --- | --- |
| A92960 |  | Walls & Slabs works | 14d | 2026-10-19 | 2026-11-03 | A92950 | 38d |
| A92970 |  | Waterproofing for Culverts | 4d | 2026-11-04 | 2026-11-08 | A92960 | 46d |
| A92980 |  | Wing walls and approach slab works | 12d | 2026-11-04 | 2026-11-17 | A92960 | 38d |
| A92990 |  | Riprap for culvert inlet and outlet slope protection | 10d | 2026-11-18 | 2026-11-29 | A92980, A92970 | 38d |
|  | CU-06 | **CU-06** |  | 2026-10-03 | 2026-11-29 |  |  |
| A92880 |  | Excavation - Box Culverts | 4d | 2026-10-03 | 2026-10-06 | A78230, A63500 | 38d |
| A92890 |  | Foundation works | 10d | 2026-10-07 | 2026-10-18 | A92880 | 38d |
| A92900 |  | Walls & Slabs works | 14d | 2026-10-19 | 2026-11-03 | A92890 | 38d |
| A92910 |  | Waterproofing for Culverts | 4d | 2026-11-04 | 2026-11-08 | A92900 | 46d |
| A92920 |  | Wing walls and approach slab works | 12d | 2026-11-04 | 2026-11-17 | A92900 | 38d |
| A92930 |  | Riprap for culvert inlet and outlet slope protection | 10d | 2026-11-18 | 2026-11-29 | A92920, A92910 | 38d |
|  | CU-07 | **CU-07** |  | 2026-10-03 | 2026-11-29 |  |  |
| A92820 |  | Excavation - Box Culverts | 4d | 2026-10-03 | 2026-10-06 | A78230, A63500 | 38d |
| A92830 |  | Foundation works | 10d | 2026-10-07 | 2026-10-18 | A92820 | 38d |
| A92840 |  | Walls & Slabs works | 14d | 2026-10-19 | 2026-11-03 | A92830 | 38d |
| A92850 |  | Waterproofing for Culverts | 4d | 2026-11-04 | 2026-11-08 | A92840 | 46d |
| A92860 |  | Wing walls and approach slab works | 12d | 2026-11-04 | 2026-11-17 | A92840 | 38d |
| A92870 |  | Riprap for culvert inlet and outlet slope protection | 10d | 2026-11-18 | 2026-11-29 | A92860, A92850 | 38d |
|  | MH-1-C /MH-2-C | **MH-1-C /MH-2-C** |  | 2026-03-09 | 2026-03-25 |  |  |
| A68080 |  | Excavation | 4d | 2026-03-09 | 2026-03-12 | A64560, A64570, A1890 | 49d |
| A68090 |  | Pipe Laying | 4d | 2026-03-14 | 2026-03-17 | A68080 | 52d |
| A68100 |  | Install Manhole | 4d | 2026-03-14 | 2026-03-17 | A68080 | 54d |
| A68110 |  | Testing & Inspection | 2d | 2026-03-18 | 2026-03-19 | A68090 | 52d |
| A68120 |  | Backfilling & Compaction | 5d | 2026-03-21 | 2026-03-25 | A68110, A68100 | 52d |
|  | MH-1-E /MH-2-E | **MH-1-E /MH-2-E** |  | 2026-03-23 | 2026-04-15 |  |  |
| A77230 |  | Excavation | 4d | 2026-03-23 | 2026-03-26 | A75080, A1890 | 51d |
| A77240 |  | Pipe Laying | 8d | 2026-03-28 | 2026-04-05 | A77230 | 51d |
| A77250 |  | Install Manhole | 4d | 2026-03-28 | 2026-03-31 | A77230 | 57d |
| A77260 |  | Testing & Inspection | 2d | 2026-04-06 | 2026-04-07 | A77240 | 51d |
| A77270 |  | Backfilling & Compaction | 5d | 2026-04-11 | 2026-04-15 | A77260, A77250, A75120 | 49d |
|  | MH-1-G /MH-2-G | **MH-1-G /MH-2-G** |  | 2026-04-06 | 2026-05-03 |  |  |
| A77380 |  | Excavation | 4d | 2026-04-06 | 2026-04-09 | A77330, A1890 | 54d |
| A77390 |  | Pipe Laying | 8d | 2026-04-11 | 2026-04-19 | A77380 | 54d |
| A77400 |  | Install Manhole | 4d | 2026-04-11 | 2026-04-14 | A77380 | 60d |
| A77410 |  | Testing & Inspection | 2d | 2026-04-20 | 2026-04-21 | A77390 | 54d |
| A77420 |  | Backfilling & Compaction | 5d | 2026-04-28 | 2026-05-03 | A77410, A77400, A77370 | 49d |
|  | MH-1-L /MH-2-L | **MH-1-L /MH-2-L** |  | 2026-05-09 | 2026-06-11 |  |  |
| A77730 |  | Excavation | 4d | 2026-05-09 | 2026-05-12 | A77680, A1890 | 60d |
| A77740 |  | Pipe Laying | 8d | 2026-05-13 | 2026-05-21 | A77730 | 60d |
| A77750 |  | Install Manhole | 4d | 2026-05-13 | 2026-05-17 | A77730 | 66d |
| A77760 |  | Testing & Inspection | 2d | 2026-05-23 | 2026-05-24 | A77740 | 60d |
| A77770 |  | Backfilling & Compaction | 5d | 2026-06-07 | 2026-06-11 | A77760, A77750, A77720 | 49d |
|  | MH-1-N /MH-2-N | **MH-1-N /MH-2-N** |  | 2026-06-01 | 2026-07-11 |  |  |
| A77980 |  | Excavation | 4d | 2026-06-01 | 2026-06-04 | A77930, A1890 | 65d |
| A77990 |  | Pipe Laying | 8d | 2026-06-06 | 2026-06-14 | A77980 | 65d |
| A78000 |  | Install Manhole | 4d | 2026-06-06 | 2026-06-09 | A77980 | 71d |
| A78010 |  | Testing & Inspection | 2d | 2026-06-15 | 2026-06-16 | A77990 | 65d |
| A78020 |  | Backfilling & Compaction | 5d | 2026-07-06 | 2026-07-11 | A78010, A78000, A77970 | 49d |
|  | MH-1-P /MH-2-P | **MH-1-P /MH-2-P** |  | 2026-06-10 | 2026-07-22 |  |  |
| A78080 |  | Excavation | 4d | 2026-06-10 | 2026-06-14 | A78030, A1890 | 67d |
| A78090 |  | Pipe Laying | 8d | 2026-06-15 | 2026-06-23 | A78080 | 67d |
| A78100 |  | Install Manhole | 4d | 2026-06-15 | 2026-06-18 | A78080 | 73d |
| A78110 |  | Testing & Inspection | 2d | 2026-06-24 | 2026-06-25 | A78090 | 67d |
| A78120 |  | Backfilling & Compaction | 5d | 2026-07-18 | 2026-07-22 | A78110, A78100, A78070 | 49d |
|  | MH-2-C /MH-3-C | **MH-2-C /MH-3-C** |  | 2026-03-14 | 2026-04-04 |  |  |
| A68130 |  | Excavation | 4d | 2026-03-14 | 2026-03-17 | A68080, A1890 | 49d |
| A68140 |  | Pipe Laying | 8d | 2026-03-18 | 2026-03-26 | A68130 | 49d |
| A68150 |  | Install Manhole | 4d | 2026-03-18 | 2026-03-22 | A68130 | 55d |
| A68160 |  | Testing & Inspection | 2d | 2026-03-28 | 2026-03-29 | A68140 | 49d |
| A68170 |  | Backfilling & Compaction | 5d | 2026-03-30 | 2026-04-04 | A68160, A68150, A68120 | 49d |
|  | MH-2-E /MH-3-E | **MH-2-E /MH-3-E** |  | 2026-03-28 | 2026-04-21 |  |  |
| A77280 |  | Excavation | 4d | 2026-03-28 | 2026-03-31 | A77230, A1890 | 52d |
| A77290 |  | Pipe Laying | 8d | 2026-04-01 | 2026-04-09 | A77280 | 52d |
| A77300 |  | Install Manhole | 4d | 2026-04-01 | 2026-04-05 | A77280 | 58d |
| A77310 |  | Testing & Inspection | 2d | 2026-04-11 | 2026-04-12 | A77290 | 52d |
| A77320 |  | Backfilling & Compaction | 5d | 2026-04-16 | 2026-04-21 | A77310, A77300, A77270 | 49d |
|  | MH-2-G /MH-3-G | **MH-2-G /MH-3-G** |  | 2026-04-11 | 2026-05-09 |  |  |
| A77430 |  | Excavation | 4d | 2026-04-11 | 2026-04-14 | A77380, A1890 | 55d |
| A77440 |  | Pipe Laying | 8d | 2026-04-15 | 2026-04-23 | A77430 | 55d |
| A77450 |  | Install Manhole | 4d | 2026-04-15 | 2026-04-19 | A77430 | 61d |

| ID | WBS | Task | Duration | Start | Finish | Predecessors | Total float |
| --- | --- | --- | --- | --- | --- | --- | --- |
| A77460 |  | Testing & Inspection | 2d | 2026-04-25 | 2026-04-26 | A77440 | 55d |
| A77470 |  | Backfilling & Compaction | 5d | 2026-05-04 | 2026-05-09 | A77460, A77450, A77420 | 49d |
|  | MH-2-L /MH-3-L | **MH-2-L /MH-3-L** |  | 2026-05-13 | 2026-06-17 |  |  |
| A77780 |  | Excavation | 4d | 2026-05-13 | 2026-05-17 | A77730, A1890 | 62d |
| A77790 |  | Pipe Laying | 4d | 2026-05-18 | 2026-05-21 | A77780 | 65d |
| A77800 |  | Install Manhole | 4d | 2026-05-18 | 2026-05-21 | A77780 | 67d |
| A77810 |  | Testing & Inspection | 2d | 2026-05-23 | 2026-05-24 | A77790 | 65d |
| A77820 |  | Backfilling & Compaction | 5d | 2026-06-13 | 2026-06-17 | A77810, A77800, A77770 | 49d |
|  | MH-2-N / 0-N | **MH-2-N / 0-N** |  | 2026-06-06 | 2026-07-16 |  |  |
| A78030 |  | Excavation | 4d | 2026-06-06 | 2026-06-09 | A77980, A1890 | 66d |
| A78040 |  | Pipe Laying | 8d | 2026-06-10 | 2026-06-18 | A78030 | 66d |
| A78050 |  | Install Manhole | 4d | 2026-06-10 | 2026-06-14 | A78030 | 72d |
| A78060 |  | Testing & Inspection | 2d | 2026-06-20 | 2026-06-21 | A78040 | 66d |
| A78070 |  | Backfilling & Compaction | 5d | 2026-07-12 | 2026-07-16 | A78060, A78050, A78020 | 49d |
|  | MH-2-P /MH-3-P | **MH-2-P /MH-3-P** |  | 2026-06-15 | 2026-07-28 |  |  |
| A78130 |  | Excavation | 4d | 2026-06-15 | 2026-06-18 | A78080, A1890 | 68d |
| A78140 |  | Pipe Laying | 8d | 2026-06-20 | 2026-06-28 | A78130 | 68d |
| A78150 |  | Install Manhole | 4d | 2026-06-20 | 2026-06-23 | A78130 | 74d |
| A78160 |  | Testing & Inspection | 2d | 2026-06-29 | 2026-06-30 | A78140 | 68d |
| A78170 |  | Backfilling & Compaction | 5d | 2026-07-23 | 2026-07-28 | A78160, A78150, A78120 | 49d |
|  | MH-3-C / 0-C | **MH-3-C / 0-C** |  | 2026-03-18 | 2026-04-09 |  |  |
| A75080 |  | Excavation | 4d | 2026-03-18 | 2026-03-22 | A68130, A1890 | 50d |
| A75090 |  | Pipe Laying | 8d | 2026-03-23 | 2026-03-31 | A75080 | 50d |
| A75100 |  | Install Manhole | 4d | 2026-03-23 | 2026-03-26 | A75080 | 56d |
| A75110 |  | Testing & Inspection | 2d | 2026-04-01 | 2026-04-02 | A75090 | 50d |
| A75120 |  | Backfilling & Compaction | 5d | 2026-04-05 | 2026-04-09 | A75110, A75100, A68170 | 49d |
|  | MH-3-E / 0-E | **MH-3-E / 0-E** |  | 2026-04-01 | 2026-04-27 |  |  |
| A77330 |  | Excavation | 4d | 2026-04-01 | 2026-04-05 | A77280, A1890 | 53d |
| A77340 |  | Pipe Laying | 8d | 2026-04-06 | 2026-04-14 | A77330 | 53d |
| A77350 |  | Install Manhole | 4d | 2026-04-06 | 2026-04-09 | A77330 | 59d |
| A77360 |  | Testing & Inspection | 2d | 2026-04-15 | 2026-04-16 | A77340 | 53d |
| A77370 |  | Backfilling & Compaction | 5d | 2026-04-22 | 2026-04-27 | A77360, A77350, A77320 | 49d |
|  | MH-3-G /MH-4-G | **MH-3-G /MH-4-G** |  | 2026-04-15 | 2026-05-14 |  |  |
| A77480 |  | Excavation | 4d | 2026-04-15 | 2026-04-19 | A77430, A1890 | 56d |
| A77490 |  | Pipe Laying | 8d | 2026-04-20 | 2026-04-28 | A77480 | 56d |
| A77500 |  | Install Manhole | 4d | 2026-04-20 | 2026-04-23 | A77480 | 62d |
| A77510 |  | Testing & Inspection | 2d | 2026-04-29 | 2026-04-30 | A77490 | 56d |
| A77520 |  | Backfilling & Compaction | 5d | 2026-05-10 | 2026-05-14 | A77510, A77500, A77470 | 49d |
|  | MH-3-L /MH-4-L | **MH-3-L /MH-4-L** |  | 2026-05-18 | 2026-06-23 |  |  |
| A77830 |  | Excavation | 4d | 2026-05-18 | 2026-05-21 | A77780, A1890 | 62d |
| A77840 |  | Pipe Laying | 8d | 2026-05-23 | 2026-05-31 | A77830 | 62d |
| A77850 |  | Install Manhole | 4d | 2026-05-23 | 2026-05-26 | A77830 | 68d |
| A77860 |  | Testing & Inspection | 2d | 2026-06-01 | 2026-06-02 | A77840 | 62d |
| A77870 |  | Backfilling & Compaction | 5d | 2026-06-18 | 2026-06-23 | A77860, A77850, A77820 | 49d |
|  | MH-3-P /MH-4-P | **MH-3-P /MH-4-P** |  | 2026-06-20 | 2026-08-03 |  |  |
| A78180 |  | Excavation | 4d | 2026-06-20 | 2026-06-23 | A78130, A1890 | 69d |
| A78190 |  | Pipe Laying | 8d | 2026-06-24 | 2026-07-02 | A78180 | 69d |
| A78200 |  | Install Manhole | 4d | 2026-06-24 | 2026-06-28 | A78180 | 75d |
| A78210 |  | Testing & Inspection | 2d | 2026-07-04 | 2026-07-05 | A78190 | 69d |
| A78220 |  | Backfilling & Compaction | 5d | 2026-07-29 | 2026-08-03 | A78210, A78200, A78170 | 49d |
|  | MH-4-G /MH-5-G | **MH-4-G /MH-5-G** |  | 2026-04-20 | 2026-05-20 |  |  |
| A77530 |  | Excavation | 4d | 2026-04-20 | 2026-04-23 | A77480, A1890 | 57d |
| A77540 |  | Pipe Laying | 8d | 2026-04-25 | 2026-05-03 | A77530 | 57d |
| A77550 |  | Install Manhole | 4d | 2026-04-25 | 2026-04-28 | A77530 | 63d |
| A77560 |  | Testing & Inspection | 2d | 2026-05-04 | 2026-05-05 | A77540 | 57d |
| A77570 |  | Backfilling & Compaction | 5d | 2026-05-16 | 2026-05-20 | A77560, A77550, A77520 | 49d |
|  | MH-4-L /MH-5-L | **MH-4-L /MH-5-L** |  | 2026-05-23 | 2026-06-29 |  |  |
| A77880 |  | Excavation | 4d | 2026-05-23 | 2026-05-26 | A77830, A1890 | 63d |
| A77890 |  | Pipe Laying | 8d | 2026-05-27 | 2026-06-04 | A77880 | 63d |
| A77900 |  | Install Manhole | 4d | 2026-05-27 | 2026-05-31 | A77880 | 69d |
| A77910 |  | Testing & Inspection | 2d | 2026-06-06 | 2026-06-07 | A77890 | 63d |
| A77920 |  | Backfilling & Compaction | 5d | 2026-06-24 | 2026-06-29 | A77910, A77900, A77870 | 49d |
|  | MH-4-P / 0-P | **MH-4-P / 0-P** |  | 2026-06-24 | 2026-08-09 |  |  |
| A78230 |  | Excavation | 4d | 2026-06-24 | 2026-06-28 | A78180, A1890 | 70d |
| A78240 |  | Pipe Laying | 8d | 2026-06-29 | 2026-07-07 | A78230 | 70d |
| A78250 |  | Install Manhole | 4d | 2026-06-29 | 2026-07-02 | A78230 | 76d |
| A78260 |  | Testing & Inspection | 2d | 2026-07-08 | 2026-07-09 | A78240 | 70d |
| A78270 |  | Backfilling & Compaction | 5d | 2026-08-04 | 2026-08-09 | A78260, A78250, A78220 | 49d |
|  | MH-5-G / 0-G | **MH-5-G / 0-G** |  | 2026-04-25 | 2026-05-26 |  |  |
| A77580 |  | Excavation | 4d | 2026-04-25 | 2026-04-28 | A77530, A1890 | 58d |

| ID | WBS | Task | Duration | Start | Finish | Predecessors | Total float |
| --- | --- | --- | --- | --- | --- | --- | --- |
| A77590 |  | Pipe Laying | 8d | 2026-04-29 | 2026-05-07 | A77580 | 58d |
| A77600 |  | Install Manhole | 4d | 2026-04-29 | 2026-05-03 | A77580 | 64d |
| A77610 |  | Testing & Inspection | 2d | 2026-05-09 | 2026-05-10 | A77590 | 58d |
| A77620 |  | Backfilling & Compaction | 5d | 2026-05-21 | 2026-05-26 | A77610, A77600, A77570 | 49d |
|  | MH-5-G-1 /MH-5-G | **MH-5-G-1 /MH-5-G** |  | 2026-04-29 | 2026-06-01 |  |  |
| A77630 |  | Excavation | 4d | 2026-04-29 | 2026-05-03 | A77580, A1890 | 59d |
| A77640 |  | Pipe Laying | 8d | 2026-05-04 | 2026-05-12 | A77630 | 59d |
| A77650 |  | Install Manhole | 4d | 2026-05-04 | 2026-05-07 | A77630 | 65d |
| A77660 |  | Testing & Inspection | 2d | 2026-05-13 | 2026-05-14 | A77640 | 59d |
| A77670 |  | Backfilling & Compaction | 5d | 2026-05-27 | 2026-06-01 | A77660, A77650, A77620 | 49d |
|  | MH-5-G-2 /MH-5-G-1 | **MH-5-G-2 /MH-5-G-1** |  | 2026-05-04 | 2026-06-06 |  |  |
| A77680 |  | Excavation | 4d | 2026-05-04 | 2026-05-07 | A77630, A1890 | 60d |
| A77690 |  | Pipe Laying | 8d | 2026-05-09 | 2026-05-17 | A77680 | 60d |
| A77700 |  | Install Manhole | 4d | 2026-05-09 | 2026-05-12 | A77680 | 66d |
| A77710 |  | Testing & Inspection | 2d | 2026-05-18 | 2026-05-19 | A77690 | 60d |
| A77720 |  | Backfilling & Compaction | 4d | 2026-06-02 | 2026-06-06 | A77710, A77700, A77670 | 49d |
|  | MH-5-L / 0-L | **MH-5-L / 0-L** |  | 2026-05-27 | 2026-07-05 |  |  |
| A77930 |  | Excavation | 4d | 2026-05-27 | 2026-05-31 | A77880, A1890 | 64d |
| A77940 |  | Pipe Laying | 8d | 2026-06-01 | 2026-06-09 | A77930 | 64d |
| A77950 |  | Install Manhole | 4d | 2026-06-01 | 2026-06-04 | A77930 | 70d |
| A77960 |  | Testing & Inspection | 2d | 2026-06-10 | 2026-06-11 | A77940 | 64d |
| A77970 |  | Backfilling & Compaction | 5d | 2026-06-30 | 2026-07-05 | A77960, A77950, A77920 | 49d |
|  | EX LR 03 | **EX LR 03** |  | 2026-06-29 | 2026-09-17 |  |  |
|  | MH-A35 /MH-A36 | **MH-A35 /MH-A36** |  | 2026-06-29 | 2026-07-23 |  |  |
| A79930 |  | Excavation | 4d | 2026-06-29 | 2026-07-02 | A78230 | 100d |
| A79940 |  | Pipe Laying | 8d | 2026-07-04 | 2026-07-12 | A79930 | 100d |
| A79950 |  | Install Manhole | 4d | 2026-07-04 | 2026-07-07 | A79930 | 106d |
| A79960 |  | Testing & Inspection | 2d | 2026-07-13 | 2026-07-14 | A79940 | 100d |
| A79970 |  | Backfilling & Compaction | 8d | 2026-07-15 | 2026-07-23 | A79960, A79950 | 100d |
|  | MH-A36 /MH-A37 | **MH-A36 /MH-A37** |  | 2026-07-04 | 2026-08-02 |  |  |
| A79880 |  | Excavation | 4d | 2026-07-04 | 2026-07-07 | A79930 | 104d |
| A79890 |  | Pipe Laying | 8d | 2026-07-08 | 2026-07-16 | A79880 | 104d |
| A79900 |  | Install Manhole | 4d | 2026-07-08 | 2026-07-12 | A79880 | 110d |
| A79910 |  | Testing & Inspection | 2d | 2026-07-18 | 2026-07-19 | A79890 | 104d |
| A79920 |  | Backfilling & Compaction | 8d | 2026-07-25 | 2026-08-02 | A79910, A79900, A79970 | 100d |
|  | MH-A37 /MH-A38 | **MH-A37 /MH-A38** |  | 2026-07-08 | 2026-08-11 |  |  |
| A79830 |  | Excavation | 4d | 2026-07-08 | 2026-07-12 | A79880 | 108d |
| A79840 |  | Pipe Laying | 8d | 2026-07-13 | 2026-07-21 | A79830 | 108d |
| A79850 |  | Install Manhole | 4d | 2026-07-13 | 2026-07-16 | A79830 | 114d |
| A79860 |  | Testing & Inspection | 2d | 2026-07-22 | 2026-07-23 | A79840 | 108d |
| A79870 |  | Backfilling & Compaction | 8d | 2026-08-03 | 2026-08-11 | A79860, A79850, A79920 | 100d |
|  | MH-A38 /MH-A39 | **MH-A38 /MH-A39** |  | 2026-07-13 | 2026-08-20 |  |  |
| A79780 |  | Excavation | 4d | 2026-07-13 | 2026-07-16 | A79830 | 112d |
| A79790 |  | Pipe Laying | 8d | 2026-07-18 | 2026-07-26 | A79780 | 112d |
| A79800 |  | Install Manhole | 4d | 2026-07-18 | 2026-07-21 | A79780 | 118d |
| A79810 |  | Testing & Inspection | 2d | 2026-07-27 | 2026-07-28 | A79790 | 112d |
| A79820 |  | Backfilling & Compaction | 8d | 2026-08-12 | 2026-08-20 | A79810, A79800, A79870 | 100d |
|  | MH-A39 /MH-A40 | **MH-A39 /MH-A40** |  | 2026-07-18 | 2026-08-30 |  |  |
| A79730 |  | Excavation | 4d | 2026-07-18 | 2026-07-21 | A79780 | 116d |
| A79740 |  | Pipe Laying | 8d | 2026-07-22 | 2026-07-30 | A79730 | 116d |
| A79750 |  | Install Manhole | 4d | 2026-07-22 | 2026-07-26 | A79730 | 122d |
| A79760 |  | Testing & Inspection | 2d | 2026-08-01 | 2026-08-02 | A79740 | 116d |
| A79770 |  | Backfilling & Compaction | 8d | 2026-08-22 | 2026-08-30 | A79760, A79750, A79820 | 100d |
|  | MH-A40 /MH-A41 | **MH-A40 /MH-A41** |  | 2026-07-22 | 2026-09-08 |  |  |
| A79680 |  | Excavation | 4d | 2026-07-22 | 2026-07-26 | A79730 | 120d |
| A79690 |  | Pipe Laying | 8d | 2026-07-27 | 2026-08-04 | A79680 | 120d |
| A79700 |  | Install Manhole | 4d | 2026-07-27 | 2026-07-30 | A79680 | 126d |
| A79710 |  | Testing & Inspection | 2d | 2026-08-05 | 2026-08-06 | A79690 | 120d |
| A79720 |  | Backfilling & Compaction | 8d | 2026-08-31 | 2026-09-08 | A79710, A79700, A79770 | 100d |
|  | MH-A41 /MH-A42 | **MH-A41 /MH-A42** |  | 2026-07-27 | 2026-09-17 |  |  |
| A79630 |  | Excavation | 4d | 2026-07-27 | 2026-07-30 | A79680 | 124d |
| A79640 |  | Pipe Laying | 8d | 2026-08-01 | 2026-08-09 | A79630 | 124d |
| A79650 |  | Install Manhole | 4d | 2026-08-01 | 2026-08-04 | A79630 | 130d |
| A79660 |  | Testing & Inspection | 2d | 2026-08-10 | 2026-08-11 | A79640 | 124d |
| A79670 |  | Backfilling & Compaction | 8d | 2026-09-09 | 2026-09-17 | A79660, A79650, A79720 | 100d |
|  | A R L-1 | **A R L-1** |  | 2026-03-17 | 2026-07-27 |  |  |
|  | MH-1-Q /MH-2-Q | **MH-1-Q /MH-2-Q** |  | 2026-03-17 | 2026-04-13 |  |  |
| A67080 |  | Excavation | 4d | 2026-03-17 | 2026-03-21 | A62730, A64620, A64630, A1880, A1890, A1900, A1910, A1920, A1890 FF | 80d |
| A67090 |  | Pipe Laying | 8d | 2026-03-22 | 2026-03-30 | A67080 | 80d |
| A67100 |  | Install Manhole | 4d | 2026-03-22 | 2026-03-25 | A67080 | 86d |

| ID | WBS | Task | Duration | Start | Finish | Predecessors | Total float |
| --- | --- | --- | --- | --- | --- | --- | --- |
| A67110 |  | Testing & Inspection | 2d | 2026-03-31 | 2026-04-01 | A67090 | 80d |
| A67120 |  | Backfilling & Compaction | 10d | 2026-04-02 | 2026-04-13 | A67110, A67100 | 80d |
|  | MH-10-Q /MH-11-Q | **MH-10-Q /MH-11-Q** |  | 2026-04-28 | 2026-07-27 |  |  |
| A67330 |  | Excavation | 4d | 2026-04-28 | 2026-05-02 | A67380, A1890 | 193d |
| A67340 |  | Pipe Laying | 14d | 2026-05-03 | 2026-05-18 | A67330 | 193d |
| A67350 |  | Install Manhole | 4d | 2026-05-03 | 2026-05-06 | A67330 | 205d |
| A67360 |  | Testing & Inspection | 2d | 2026-05-19 | 2026-05-20 | A67340 | 193d |
| A67370 |  | Backfilling & Compaction | 10d | 2026-07-16 | 2026-07-27 | A67360, A67350, A67420 | 145d |
|  | MH-2-Q /MH-3-Q | **MH-2-Q /MH-3-Q** |  | 2026-03-22 | 2026-04-25 |  |  |
| A67130 |  | Excavation | 4d | 2026-03-22 | 2026-03-25 | A67080, A1890 | 145d |
| A67140 |  | Pipe Laying | 14d | 2026-03-26 | 2026-04-11 | A67130 | 145d |
| A67150 |  | Install Manhole | 4d | 2026-03-26 | 2026-03-30 | A67130 | 157d |
| A67160 |  | Testing & Inspection | 2d | 2026-04-12 | 2026-04-13 | A67140 | 145d |
| A67170 |  | Backfilling & Compaction | 10d | 2026-04-14 | 2026-04-25 | A67160, A67150, A67120 | 145d |
|  | MH-3-Q /MH-4-Q | **MH-3-Q /MH-4-Q** |  | 2026-03-26 | 2026-05-06 |  |  |
| A67180 |  | Excavation | 4d | 2026-03-26 | 2026-03-30 | A67130, A1890 | 151d |
| A67190 |  | Pipe Laying | 14d | 2026-03-31 | 2026-04-15 | A67180 | 151d |
| A67200 |  | Install Manhole | 4d | 2026-03-31 | 2026-04-04 | A67180 | 163d |
| A67210 |  | Testing & Inspection | 2d | 2026-04-16 | 2026-04-18 | A67190 | 151d |
| A67220 |  | Backfilling & Compaction | 10d | 2026-04-26 | 2026-05-06 | A67210, A67200, A67170 | 145d |
|  | MH-4-Q /MH-5-Q | **MH-4-Q /MH-5-Q** |  | 2026-03-31 | 2026-05-18 |  |  |
| A67230 |  | Excavation | 4d | 2026-03-31 | 2026-04-04 | A67180, A1890 | 157d |
| A67240 |  | Pipe Laying | 14d | 2026-04-05 | 2026-04-20 | A67230 | 157d |
| A67250 |  | Install Manhole | 4d | 2026-04-05 | 2026-04-08 | A67230 | 169d |
| A67260 |  | Testing & Inspection | 2d | 2026-04-21 | 2026-04-22 | A67240 | 157d |
| A67270 |  | Backfilling & Compaction | 10d | 2026-05-07 | 2026-05-18 | A67260, A67250, A67220 | 145d |
|  | MH-5-Q /MH-6-Q | **MH-5-Q /MH-6-Q** |  | 2026-04-05 | 2026-05-30 |  |  |
| A67280 |  | Excavation | 4d | 2026-04-05 | 2026-04-08 | A67230, A1890 | 163d |
| A67290 |  | Pipe Laying | 14d | 2026-04-09 | 2026-04-25 | A67280 | 163d |
| A67300 |  | Install Manhole | 4d | 2026-04-09 | 2026-04-13 | A67280 | 175d |
| A67310 |  | Testing & Inspection | 2d | 2026-04-26 | 2026-04-27 | A67290 | 163d |
| A67320 |  | Backfilling & Compaction | 10d | 2026-05-19 | 2026-05-30 | A67310, A67300, A67270 | 145d |
|  | MH-6-Q /MH-7-Q | **MH-6-Q /MH-7-Q** |  | 2026-04-09 | 2026-06-10 |  |  |
| A67430 |  | Excavation | 4d | 2026-04-09 | 2026-04-13 | A67280, A1890 | 169d |
| A67440 |  | Pipe Laying | 14d | 2026-04-14 | 2026-04-29 | A67430 | 169d |
| A67450 |  | Install Manhole | 4d | 2026-04-14 | 2026-04-18 | A67430 | 181d |
| A67460 |  | Testing & Inspection | 2d | 2026-04-30 | 2026-05-02 | A67440 | 169d |
| A67470 |  | Backfilling & Compaction | 10d | 2026-05-31 | 2026-06-10 | A67460, A67450, A67320 | 145d |
|  | MH-7-Q /MH-8-Q | **MH-7-Q /MH-8-Q** |  | 2026-04-14 | 2026-06-22 |  |  |
| A67480 |  | Excavation | 4d | 2026-04-14 | 2026-04-18 | A67430, A1890 | 175d |
| A67490 |  | Pipe Laying | 14d | 2026-04-19 | 2026-05-04 | A67480 | 175d |
| A67500 |  | Install Manhole | 4d | 2026-04-19 | 2026-04-22 | A67480 | 187d |
| A67510 |  | Testing & Inspection | 2d | 2026-05-05 | 2026-05-06 | A67490 | 175d |
| A67520 |  | Backfilling & Compaction | 10d | 2026-06-11 | 2026-06-22 | A67510, A67500, A67470 | 145d |
|  | MH-8-Q /MH-9-Q | **MH-8-Q /MH-9-Q** |  | 2026-04-19 | 2026-07-04 |  |  |
| A67530 |  | Excavation | 4d | 2026-04-19 | 2026-04-22 | A67480, A1890 | 181d |
| A67540 |  | Pipe Laying | 14d | 2026-04-23 | 2026-05-09 | A67530 | 181d |
| A67550 |  | Install Manhole | 4d | 2026-04-23 | 2026-04-27 | A67530 | 193d |
| A67560 |  | Testing & Inspection | 2d | 2026-05-10 | 2026-05-11 | A67540 | 181d |
| A67570 |  | Backfilling & Compaction | 10d | 2026-06-23 | 2026-07-04 | A67560, A67550, A67520 | 145d |
|  | MH-9-Q /MH-10-Q | **MH-9-Q /MH-10-Q** |  | 2026-04-23 | 2026-07-15 |  |  |
| A67380 |  | Excavation | 4d | 2026-04-23 | 2026-04-27 | A67530, A1890 | 187d |
| A67390 |  | Pipe Laying | 14d | 2026-04-28 | 2026-05-13 | A67380 | 187d |
| A67400 |  | Install Manhole | 4d | 2026-04-28 | 2026-05-02 | A67380 | 199d |
| A67410 |  | Testing & Inspection | 2d | 2026-05-14 | 2026-05-16 | A67390 | 187d |
| A67420 |  | Backfilling & Compaction | 10d | 2026-07-05 | 2026-07-15 | A67410, A67400, A67570 | 145d |
|  | EX LR 26 | **EX LR 26** |  | 2026-03-18 | 2026-05-03 |  |  |
|  | MH-12-O /MH-13-O | **MH-12-O /MH-13-O** |  | 2026-03-18 | 2026-04-21 |  |  |
| A78630 |  | Excavation | 4d | 2026-03-18 | 2026-03-22 | A1890, A75130 | 5d |
| A78640 |  | Pipe Laying | 14d | 2026-03-23 | 2026-04-07 | A78630 | 218d |
| A78650 |  | Install Manhole | 4d | 2026-03-23 | 2026-03-26 | A78630 | 230d |
| A78660 |  | Testing & Inspection | 2d | 2026-04-08 | 2026-04-09 | A78640 | 218d |
| A78670 |  | Backfilling & Compaction | 10d | 2026-04-11 | 2026-04-21 | A78660, A78650 | 218d |
|  | MH-13-O /MH-O-0 | **MH-13-O /MH-O-0** |  | 2026-03-23 | 2026-05-03 |  |  |
| A78680 |  | Excavation | 4d | 2026-03-23 | 2026-03-26 | A78630, A1890 | 5d |
| A78690 |  | Pipe Laying | 14d | 2026-03-28 | 2026-04-12 | A78680 | 224d |
| A78700 |  | Install Manhole | 4d | 2026-03-28 | 2026-03-31 | A78680 | 236d |
| A78710 |  | Testing & Inspection | 2d | 2026-04-13 | 2026-04-14 | A78690 | 224d |
| A78720 |  | Backfilling & Compaction | 10d | 2026-04-22 | 2026-05-03 | A78710, A78700, A78670 | 218d |
|  | LR 18 | **LR 18** |  | 2026-01-24 | 2026-03-31 |  |  |

| ID | WBS | Task | Duration | Start | Finish | Predecessors | Total float |
| --- | --- | --- | --- | --- | --- | --- | --- |
|  | MH-1-B /MH-2-B | **MH-1-B /MH-2-B** |  | 2026-01-24 | 2026-03-08 |  |  |
| A78730 |  | Excavation | 4d | 2026-01-24 | 2026-01-27 | A62720, A62730, A1890 | 173d |
| A78750 |  | Install Manhole | 4d | 2026-01-28 | 2026-02-01 | A78730 | 185d |
| A78740 |  | Pipe Laying | 14d | 2026-02-14 | 2026-03-01 | A78730, A10960 SS+24d | 159d |
| A78760 |  | Testing & Inspection | 2d | 2026-03-02 | 2026-03-03 | A78740 | 159d |
| A78770 |  | Backfilling & Compaction | 4d | 2026-03-04 | 2026-03-08 | A78760, A78750 | 159d |
|  | MH-2-B /MH-3-B | **MH-2-B /MH-3-B** |  | 2026-01-28 | 2026-03-19 |  |  |
| A78780 |  | Excavation | 4d | 2026-01-28 | 2026-02-01 | A78730, A1890 | 185d |
| A78790 |  | Pipe Laying | 14d | 2026-02-02 | 2026-02-17 | A78780, A10960 SS+14d | 185d |
| A78800 |  | Install Manhole | 4d | 2026-02-02 | 2026-02-05 | A78780 | 197d |
| A78810 |  | Testing & Inspection | 2d | 2026-02-18 | 2026-02-19 | A78790 | 185d |
| A78820 |  | Backfilling & Compaction | 10d | 2026-03-09 | 2026-03-19 | A78810, A78800, A78770 | 171d |
|  | MH-3-B /MH-4-B | **MH-3-B /MH-4-B** |  | 2026-02-02 | 2026-03-31 |  |  |
| A78830 |  | Excavation | 4d | 2026-02-02 | 2026-02-05 | A78780, A1890 | 191d |
| A78840 |  | Pipe Laying | 14d | 2026-02-07 | 2026-02-22 | A78830, A10960 SS+14d | 191d |
| A78850 |  | Install Manhole | 4d | 2026-02-07 | 2026-02-10 | A78830 | 203d |
| A78860 |  | Testing & Inspection | 2d | 2026-02-23 | 2026-02-24 | A78840 | 191d |
| A78870 |  | Backfilling & Compaction | 10d | 2026-03-21 | 2026-03-31 | A78860, A78850, A78820 | 171d |
|  | LR 19 | **LR 19** |  | 2026-01-24 | 2026-03-31 |  |  |
|  | MH-4-B /MH-5-B | **MH-4-B /MH-5-B** |  | 2026-01-28 | 2026-03-15 |  |  |
| A78930 |  | Excavation | 4d | 2026-01-28 | 2026-02-01 | A78880, A1890 | 187d |
| A78940 |  | Pipe Laying | 14d | 2026-02-02 | 2026-02-17 | A78930, A10960 SS+14d | 187d |
| A78950 |  | Install Manhole | 4d | 2026-02-02 | 2026-02-05 | A78930 | 199d |
| A78960 |  | Testing & Inspection | 2d | 2026-02-18 | 2026-02-19 | A78940 | 187d |
| A78970 |  | Backfilling & Compaction | 10d | 2026-03-04 | 2026-03-15 | A78960, A78950, A78920 | 177d |
|  | MH-4-B-1 /MH-4-B | **MH-4-B-1 /MH-4-B** |  | 2026-01-24 | 2026-03-03 |  |  |
| A78880 |  | Excavation | 4d | 2026-01-24 | 2026-01-27 | A64350, A64360, A1890 | 175d |
| A78900 |  | Install Manhole | 4d | 2026-01-28 | 2026-02-01 | A78880 | 187d |
| A78890 |  | Pipe Laying | 14d | 2026-02-02 | 2026-02-17 | A78880, A10960 SS+14d | 171d |
| A78910 |  | Testing & Inspection | 2d | 2026-02-18 | 2026-02-19 | A78890 | 171d |
| A78920 |  | Backfilling & Compaction | 10d | 2026-02-21 | 2026-03-03 | A78910, A78900 | 171d |
|  | MH-5-B /MH-6-B | **MH-5-B /MH-6-B** |  | 2026-02-02 | 2026-03-19 |  |  |
| A78980 |  | Excavation | 4d | 2026-02-02 | 2026-02-05 | A78930, A1890 | 193d |
| A78990 |  | Pipe Laying | 14d | 2026-02-07 | 2026-02-22 | A78980 | 193d |
| A79000 |  | Install Manhole | 4d | 2026-02-07 | 2026-02-10 | A78980 | 205d |
| A79010 |  | Testing & Inspection | 2d | 2026-02-23 | 2026-02-24 | A78990 | 193d |
| A79020 |  | Backfilling & Compaction | 4d | 2026-03-16 | 2026-03-19 | A79010, A79000, A78970 | 177d |
|  | MH-6-B / 0-B | **MH-6-B / 0-B** |  | 2026-02-07 | 2026-03-31 |  |  |
| A79030 |  | Excavation | 4d | 2026-02-07 | 2026-02-10 | A78980, A1890 | 193d |
| A79040 |  | Pipe Laying | 14d | 2026-02-11 | 2026-02-26 | A79030 | 193d |
| A79050 |  | Install Manhole | 4d | 2026-02-11 | 2026-02-15 | A79030 | 205d |
| A79060 |  | Testing & Inspection | 2d | 2026-02-28 | 2026-03-01 | A79040 | 193d |
| A79070 |  | Backfilling & Compaction | 10d | 2026-03-21 | 2026-03-31 | A79060, A79050, A79020 | 177d |
|  | LR 20 | **LR 20** |  | 2026-01-22 | 2026-04-12 |  |  |
|  | MH-1-D /MH-2-D | **MH-1-D /MH-2-D** |  | 2026-01-22 | 2026-03-03 |  |  |
| A79080 |  | Excavation | 4d | 2026-01-22 | 2026-01-26 | A64380, A64390, A1890 | 166d |
| A79100 |  | Install Manhole | 4d | 2026-01-27 | 2026-01-31 | A79080 | 178d |
| A79090 |  | Pipe Laying | 14d | 2026-02-02 | 2026-02-17 | A79080, A10960 SS+14d | 161d |
| A79110 |  | Testing & Inspection | 2d | 2026-02-18 | 2026-02-19 | A79090 | 161d |
| A79120 |  | Backfilling & Compaction | 10d | 2026-02-21 | 2026-03-03 | A79110, A79100 | 161d |
|  | MH-2-D /MH-3-D | **MH-2-D /MH-3-D** |  | 2026-01-27 | 2026-03-15 |  |  |
| A79130 |  | Excavation | 4d | 2026-01-27 | 2026-01-31 | A79080, A1890 | 172d |
| A79150 |  | Install Manhole | 4d | 2026-02-01 | 2026-02-04 | A79130 | 184d |
| A79140 |  | Pipe Laying | 14d | 2026-02-02 | 2026-02-17 | A79130, A10960 SS+14d | 171d |
| A79160 |  | Testing & Inspection | 2d | 2026-02-18 | 2026-02-19 | A79140 | 171d |
| A79170 |  | Backfilling & Compaction | 10d | 2026-03-04 | 2026-03-15 | A79160, A79150, A79120 | 161d |
|  | MH-3-D /MH-4-D | **MH-3-D /MH-4-D** |  | 2026-02-01 | 2026-03-19 |  |  |
| A79180 |  | Excavation | 4d | 2026-02-01 | 2026-02-04 | A79130, A1890 | 178d |
| A79190 |  | Pipe Laying | 14d | 2026-02-05 | 2026-02-21 | A79180, A10960 SS+14d | 178d |
| A79200 |  | Install Manhole | 4d | 2026-02-05 | 2026-02-09 | A79180 | 190d |
| A79210 |  | Testing & Inspection | 2d | 2026-02-22 | 2026-02-23 | A79190 | 178d |
| A79220 |  | Backfilling & Compaction | 4d | 2026-03-16 | 2026-03-19 | A79210, A79200, A79170 | 161d |
|  | MH-4-D /MH-5-D | **MH-4-D /MH-5-D** |  | 2026-02-05 | 2026-03-31 |  |  |
| A79230 |  | Excavation | 4d | 2026-02-05 | 2026-02-09 | A79180, A1890 | 178d |
| A79240 |  | Pipe Laying | 14d | 2026-02-10 | 2026-02-25 | A79230 | 178d |
| A79250 |  | Install Manhole | 4d | 2026-02-10 | 2026-02-14 | A79230 | 190d |
| A79260 |  | Testing & Inspection | 2d | 2026-02-26 | 2026-02-28 | A79240 | 178d |
| A79270 |  | Backfilling & Compaction | 10d | 2026-03-21 | 2026-03-31 | A79260, A79250, A79220 | 161d |
|  | MH-5-D /MH-6-D | **MH-5-D /MH-6-D** |  | 2026-02-10 | 2026-04-12 |  |  |
| A79280 |  | Excavation | 4d | 2026-02-10 | 2026-02-14 | A79230, A1890 | 184d |

| ID | WBS | Task | Duration | Start | Finish | Predecessors | Total float |
| --- | --- | --- | --- | --- | --- | --- | --- |
| A79290 |  | Pipe Laying | 14d | 2026-02-15 | 2026-03-02 | A79280 | 184d |
| A79300 |  | Install Manhole | 4d | 2026-02-15 | 2026-02-18 | A79280 | 196d |
| A79310 |  | Testing & Inspection | 2d | 2026-03-03 | 2026-03-04 | A79290 | 184d |
| A79320 |  | Backfilling & Compaction | 10d | 2026-04-01 | 2026-04-12 | A79310, A79300, A79270 | 161d |
|  | LR 21 | **LR 21** |  | 2026-01-27 | 2026-04-12 |  |  |
|  | MH-2-F /MH-3-F | **MH-2-F /MH-3-F** |  | 2026-02-01 | 2026-03-15 |  |  |
| A79380 |  | Excavation | 4d | 2026-02-01 | 2026-02-04 | A79330, A1890 | 168d |
| A79390 |  | Pipe Laying | 14d | 2026-02-05 | 2026-02-21 | A79380, A10960 SS+14d | 168d |
| A79400 |  | Install Manhole | 4d | 2026-02-05 | 2026-02-09 | A79380 | 180d |
| A79410 |  | Testing & Inspection | 2d | 2026-02-22 | 2026-02-23 | A79390 | 168d |
| A79420 |  | Backfilling & Compaction | 10d | 2026-03-04 | 2026-03-15 | A79410, A79400, A79370 | 161d |
|  | MH-3-F /MH-4-F | **MH-3-F /MH-4-F** |  | 2026-02-05 | 2026-03-19 |  |  |
| A79430 |  | Excavation | 4d | 2026-02-05 | 2026-02-09 | A79380, A1890 | 174d |
| A79440 |  | Pipe Laying | 14d | 2026-02-10 | 2026-02-25 | A79430, A10960 SS+14d | 174d |
| A79450 |  | Install Manhole | 4d | 2026-02-10 | 2026-02-14 | A79430 | 186d |
| A79460 |  | Testing & Inspection | 2d | 2026-02-26 | 2026-02-28 | A79440 | 174d |
| A79470 |  | Backfilling & Compaction | 4d | 2026-03-16 | 2026-03-19 | A79460, A79450, A79420 | 161d |
|  | MH-4-F /MH-5-F | **MH-4-F /MH-5-F** |  | 2026-02-10 | 2026-03-31 |  |  |
| A79480 |  | Excavation | 4d | 2026-02-10 | 2026-02-14 | A79430, A1890 | 174d |
| A79490 |  | Pipe Laying | 14d | 2026-02-15 | 2026-03-02 | A79480 | 174d |
| A79500 |  | Install Manhole | 4d | 2026-02-15 | 2026-02-18 | A79480 | 186d |
| A79510 |  | Testing & Inspection | 2d | 2026-03-03 | 2026-03-04 | A79490 | 174d |
| A79520 |  | Backfilling & Compaction | 10d | 2026-03-21 | 2026-03-31 | A79510, A79500, A79470 | 161d |
|  | MH-5-F / 0-F | **MH-5-F / 0-F** |  | 2026-02-15 | 2026-04-12 |  |  |
| A79530 |  | Excavation | 4d | 2026-02-15 | 2026-02-18 | A79480, A1890 | 190d |
| A79540 |  | Pipe Laying | 4d | 2026-02-19 | 2026-02-23 | A79530 | 190d |
| A79550 |  | Install Manhole | 4d | 2026-02-19 | 2026-02-23 | A79530 | 192d |
| A79560 |  | Testing & Inspection | 2d | 2026-02-24 | 2026-02-25 | A79540 | 190d |
| A79570 |  | Backfilling & Compaction | 10d | 2026-04-01 | 2026-04-12 | A79560, A79550, A79520 | 161d |
|  | MH-8-O-1 /MH-2-F | **MH-8-O-1 /MH-2-F** |  | 2026-01-27 | 2026-03-03 |  |  |
| A79330 |  | Excavation | 4d | 2026-01-27 | 2026-01-31 | A64410, A64420, A1890 | 162d |
| A79350 |  | Install Manhole | 4d | 2026-02-01 | 2026-02-04 | A79330 | 174d |
| A79340 |  | Pipe Laying | 14d | 2026-02-02 | 2026-02-17 | A79330, A10960 SS+14d | 161d |
| A79360 |  | Testing & Inspection | 2d | 2026-02-18 | 2026-02-19 | A79340 | 161d |
| A79370 |  | Backfilling & Compaction | 10d | 2026-02-21 | 2026-03-03 | A79360, A79350 | 161d |
|  | LR 22 | **LR 22** |  | 2026-02-01 | 2026-03-31 |  |  |
|  | MH-1-H /MH-2-H | **MH-1-H /MH-2-H** |  | 2026-02-01 | 2026-03-08 |  |  |
| A77080 |  | Excavation | 4d | 2026-02-01 | 2026-02-04 | A64440, A64450, A1890 | 132d |
| A77100 |  | Install Manhole | 4d | 2026-02-05 | 2026-02-09 | A77080 | 144d |
| A77090 |  | Pipe Laying | 14d | 2026-02-14 | 2026-03-01 | A77080, A10960 SS+24d | 125d |
| A77110 |  | Testing & Inspection | 2d | 2026-03-02 | 2026-03-03 | A77090 | 125d |
| A77120 |  | Backfilling & Compaction | 4d | 2026-03-04 | 2026-03-08 | A77110, A77100 | 125d |
|  | MH-2-H /MH-3-H | **MH-2-H /MH-3-H** |  | 2026-02-05 | 2026-03-19 |  |  |
| A77130 |  | Excavation | 4d | 2026-02-05 | 2026-02-09 | A77080, A1890 | 164d |
| A77140 |  | Pipe Laying | 14d | 2026-02-10 | 2026-02-25 | A77130 | 164d |
| A77150 |  | Install Manhole | 4d | 2026-02-10 | 2026-02-14 | A77130 | 176d |
| A77160 |  | Testing & Inspection | 2d | 2026-02-26 | 2026-02-28 | A77140 | 164d |
| A77170 |  | Backfilling & Compaction | 10d | 2026-03-09 | 2026-03-19 | A77160, A77150, A77120 | 157d |
|  | MH-3-H /MH-4-H | **MH-3-H /MH-4-H** |  | 2026-02-10 | 2026-03-31 |  |  |
| A77180 |  | Excavation | 4d | 2026-02-10 | 2026-02-14 | A77130, A1890 | 170d |
| A77190 |  | Pipe Laying | 14d | 2026-02-15 | 2026-03-02 | A77180 | 170d |
| A77200 |  | Install Manhole | 4d | 2026-02-15 | 2026-02-18 | A77180 | 182d |
| A77210 |  | Testing & Inspection | 2d | 2026-03-03 | 2026-03-04 | A77190 | 170d |
| A77220 |  | Backfilling & Compaction | 10d | 2026-03-21 | 2026-03-31 | A77210, A77200, A77170 | 157d |
|  | LR 23 | **LR 23** |  | 2026-02-05 | 2026-03-19 |  |  |
|  | MH-1-K /MH-2-K | **MH-1-K /MH-2-K** |  | 2026-02-05 | 2026-03-08 |  |  |
| A76980 |  | Excavation | 4d | 2026-02-05 | 2026-02-09 | A64480, A1890 | 142d |
| A77000 |  | Install Manhole | 4d | 2026-02-10 | 2026-02-14 | A76980 | 154d |
| A76990 |  | Pipe Laying | 14d | 2026-02-14 | 2026-03-01 | A76980, A10960 SS+24d | 139d |
| A77010 |  | Testing & Inspection | 2d | 2026-03-02 | 2026-03-03 | A76990 | 139d |
| A77020 |  | Backfilling & Compaction | 4d | 2026-03-04 | 2026-03-08 | A77010, A77000 | 139d |
|  | MH-2-K / 0-K | **MH-2-K / 0-K** |  | 2026-02-10 | 2026-03-19 |  |  |
| A77030 |  | Excavation | 4d | 2026-02-10 | 2026-02-14 | A76980, A1890 | 184d |
| A77040 |  | Pipe Laying | 14d | 2026-02-15 | 2026-03-02 | A77030, A10960 SS+24d | 184d |
| A77050 |  | Install Manhole | 4d | 2026-02-15 | 2026-02-18 | A77030 | 196d |
| A77060 |  | Testing & Inspection | 2d | 2026-03-03 | 2026-03-04 | A77040 | 184d |
| A77070 |  | Backfilling & Compaction | 10d | 2026-03-09 | 2026-03-19 | A77060, A77050, A77020 | 181d |
|  | LR 24 | **LR 24** |  | 2026-02-10 | 2026-04-25 |  |  |
|  | MH-5-M /MH-6-M | **MH-5-M /MH-6-M** |  | 2026-02-15 | 2026-03-28 |  |  |
| A76780 |  | Excavation | 4d | 2026-02-15 | 2026-02-18 | A76730, A1890 | 162d |

| ID | WBS | Task | Duration | Start | Finish | Predecessors | Total float |
| --- | --- | --- | --- | --- | --- | --- | --- |
| A76790 |  | Pipe Laying | 4d | 2026-02-19 | 2026-02-23 | A76780 | 166d |
| A76800 |  | Install Manhole | 4d | 2026-02-19 | 2026-02-23 | A76780 | 168d |
| A76810 |  | Testing & Inspection | 2d | 2026-02-24 | 2026-02-25 | A76790 | 166d |
| A76820 |  | Backfilling & Compaction | 10d | 2026-03-17 | 2026-03-28 | A76810, A76800, A76770 | 150d |
|  | MH-5-M-1 /MH-5-M | **MH-5-M-1 /MH-5-M** |  | 2026-02-10 | 2026-03-16 |  |  |
| A76730 |  | Excavation | 4d | 2026-02-10 | 2026-02-14 | A64500, A64510, A1890 | 106d |
| A76740 |  | Pipe Laying | 14d | 2026-02-15 | 2026-03-02 | A76730, A10960 SS+24d | 106d |
| A76750 |  | Install Manhole | 4d | 2026-02-15 | 2026-02-18 | A76730 | 118d |
| A76760 |  | Testing & Inspection | 2d | 2026-03-03 | 2026-03-04 | A76740 | 106d |
| A76770 |  | Backfilling & Compaction | 10d | 2026-03-05 | 2026-03-16 | A76760, A76750 | 106d |
|  | MH-6-M /MH-7-M | **MH-6-M /MH-7-M** |  | 2026-02-19 | 2026-04-08 |  |  |
| A76830 |  | Excavation | 4d | 2026-02-19 | 2026-02-23 | A76780, A1890 | 162d |
| A76840 |  | Pipe Laying | 14d | 2026-02-24 | 2026-03-11 | A76830 | 162d |
| A76850 |  | Install Manhole | 4d | 2026-02-24 | 2026-02-28 | A76830 | 174d |
| A76860 |  | Testing & Inspection | 2d | 2026-03-12 | 2026-03-14 | A76840 | 162d |
| A76870 |  | Backfilling & Compaction | 10d | 2026-03-29 | 2026-04-08 | A76860, A76850, A76820 | 150d |
|  | MH-7-M /MH-8-M | **MH-7-M /MH-8-M** |  | 2026-02-24 | 2026-04-13 |  |  |
| A76880 |  | Excavation | 4d | 2026-02-24 | 2026-02-28 | A76830, A1890 | 168d |
| A76890 |  | Pipe Laying | 14d | 2026-03-01 | 2026-03-16 | A76880 | 168d |
| A76900 |  | Install Manhole | 4d | 2026-03-01 | 2026-03-04 | A76880 | 180d |
| A76910 |  | Testing & Inspection | 2d | 2026-03-17 | 2026-03-18 | A76890 | 168d |
| A76920 |  | Backfilling & Compaction | 4d | 2026-04-09 | 2026-04-13 | A76910, A76900, A76870 | 150d |
|  | MH-8-M / 0-M | **MH-8-M / 0-M** |  | 2026-03-01 | 2026-04-25 |  |  |
| A76930 |  | Excavation | 4d | 2026-03-01 | 2026-03-04 | A76880, A1890 | 168d |
| A76940 |  | Pipe Laying | 14d | 2026-03-05 | 2026-03-21 | A76930 | 168d |
| A76950 |  | Install Manhole | 4d | 2026-03-05 | 2026-03-09 | A76930 | 180d |
| A76960 |  | Testing & Inspection | 2d | 2026-03-22 | 2026-03-23 | A76940 | 168d |
| A76970 |  | Backfilling & Compaction | 10d | 2026-04-14 | 2026-04-25 | A76960, A76950, A76920 | 150d |
|  | LR 25 | **LR 25** |  | 2026-02-15 | 2026-04-22 |  |  |
|  | MH-1-M /MH-2-M | **MH-1-M /MH-2-M** |  | 2026-02-19 | 2026-03-25 |  |  |
| A76530 |  | Excavation | 4d | 2026-02-19 | 2026-02-23 | A76480, A1890 | 30d |
| A76540 |  | Pipe Laying | 14d | 2026-02-24 | 2026-03-11 | A76530 | 30d |
| A76550 |  | Install Manhole | 4d | 2026-02-24 | 2026-02-28 | A76530 | 42d |
| A76560 |  | Testing & Inspection | 2d | 2026-03-12 | 2026-03-14 | A76540 | 30d |
| A76570 |  | Backfilling & Compaction | 10d | 2026-03-15 | 2026-03-25 | A76560, A76550, A76520 | 30d |
|  | MH-2-F /MH-2-F-2 | **MH-2-F /MH-2-F-2** |  | 2026-02-15 | 2026-03-09 |  |  |
| A76480 |  | Excavation | 4d | 2026-02-15 | 2026-02-18 | A64530, A64540, A1890 | 0d |
| A76490 |  | Pipe Laying | 4d | 2026-02-19 | 2026-02-23 | A76480 | 0d |
| A76500 |  | Install Manhole | 4d | 2026-02-19 | 2026-02-23 | A76480 | 2d |
| A76510 |  | Testing & Inspection | 2d | 2026-02-24 | 2026-02-25 | A76490 | 0d |
| A76520 |  | Backfilling & Compaction | 10d | 2026-02-26 | 2026-03-09 | A76510, A76500 | 0d |
|  | MH-2-M /MH-3-M | **MH-2-M /MH-3-M** |  | 2026-02-24 | 2026-03-30 |  |  |
| A76580 |  | Excavation | 4d | 2026-02-24 | 2026-02-28 | A76530, A1890 | 36d |
| A76590 |  | Pipe Laying | 14d | 2026-03-01 | 2026-03-16 | A76580 | 36d |
| A76600 |  | Install Manhole | 4d | 2026-03-01 | 2026-03-04 | A76580 | 48d |
| A76610 |  | Testing & Inspection | 2d | 2026-03-17 | 2026-03-18 | A76590 | 36d |
| A76620 |  | Backfilling & Compaction | 4d | 2026-03-26 | 2026-03-30 | A76610, A76600, A76570 | 30d |
|  | MH-3-M /MH-4-M | **MH-3-M /MH-4-M** |  | 2026-03-01 | 2026-04-11 |  |  |
| A76630 |  | Excavation | 4d | 2026-03-01 | 2026-03-04 | A76580, A1890 | 36d |
| A76640 |  | Pipe Laying | 14d | 2026-03-05 | 2026-03-21 | A76630 | 36d |
| A76650 |  | Install Manhole | 4d | 2026-03-05 | 2026-03-09 | A76630 | 48d |
| A76660 |  | Testing & Inspection | 2d | 2026-03-22 | 2026-03-23 | A76640 | 36d |
| A76670 |  | Backfilling & Compaction | 10d | 2026-03-31 | 2026-04-11 | A76660, A76650, A76620 | 30d |
|  | MH-4-M /MH-5-M | **MH-4-M /MH-5-M** |  | 2026-03-05 | 2026-04-22 |  |  |
| A76680 |  | Excavation | 4d | 2026-03-05 | 2026-03-09 | A76630, A1890 | 42d |
| A76690 |  | Pipe Laying | 14d | 2026-03-10 | 2026-03-25 | A76680 | 42d |
| A76700 |  | Install Manhole | 4d | 2026-03-10 | 2026-03-14 | A76680 | 54d |
| A76710 |  | Testing & Inspection | 2d | 2026-03-26 | 2026-03-28 | A76690 | 42d |
| A76720 |  | Backfilling & Compaction | 10d | 2026-04-12 | 2026-04-22 | A76710, A76700, A76670 | 30d |
|  | LR 26 | **LR 26** |  | 2026-02-19 | 2026-10-24 |  |  |
|  | MH-1-O /MH-2-O | **MH-1-O /MH-2-O** |  | 2026-03-01 | 2026-04-04 |  |  |
| A75930 |  | Excavation | 4d | 2026-03-01 | 2026-03-04 | A75880, A1890 | 75d |
| A75940 |  | Pipe Laying | 8d | 2026-03-05 | 2026-03-14 | A75930 | 75d |
| A75950 |  | Install Manhole | 4d | 2026-03-05 | 2026-03-09 | A75930 | 81d |
| A75960 |  | Testing & Inspection | 2d | 2026-03-15 | 2026-03-16 | A75940 | 75d |
| A75970 |  | Backfilling & Compaction | 10d | 2026-03-24 | 2026-04-04 | A75960, A75950, A75920 | 69d |
|  | MH-10-O /MH-11-O | **MH-10-O /MH-11-O** |  | 2026-04-16 | 2026-07-29 |  |  |
| A75780 |  | Excavation | 4d | 2026-04-16 | 2026-04-20 | A76380, A1890 | 135d |
| A75790 |  | Pipe Laying | 8d | 2026-04-21 | 2026-04-29 | A75780 | 135d |
| A75800 |  | Install Manhole | 4d | 2026-04-21 | 2026-04-25 | A75780 | 141d |

| ID | WBS | Task | Duration | Start | Finish | Predecessors | Total float |
| --- | --- | --- | --- | --- | --- | --- | --- |
| A75810 |  | Testing & Inspection | 2d | 2026-04-30 | 2026-05-02 | A75790 | 135d |
| A75820 |  | Backfilling & Compaction | 10d | 2026-07-19 | 2026-07-29 | A75810, A75800, A76420 | 69d |
|  | MH-11-O /MH-12-O | **MH-11-O /MH-12-O** |  | 2026-04-21 | 2026-08-10 |  |  |
| A75680 |  | Excavation | 4d | 2026-04-21 | 2026-04-25 | A75780, A1890 | 141d |
| A75690 |  | Pipe Laying | 8d | 2026-04-26 | 2026-05-04 | A75680 | 141d |
| A75700 |  | Install Manhole | 4d | 2026-04-26 | 2026-04-29 | A75680 | 147d |
| A75710 |  | Testing & Inspection | 2d | 2026-05-05 | 2026-05-06 | A75690 | 141d |
| A75720 |  | Backfilling & Compaction | 10d | 2026-07-30 | 2026-08-10 | A75710, A75700, A75820 | 69d |
|  | MH-13-O-1 /MH-13-O-0 | **MH-13-O-1 /MH-13-O-0** |  | 2026-05-24 | 2026-10-24 |  |  |
| A75380 |  | Excavation | 4d | 2026-05-24 | 2026-05-27 | A75430, A1890 | 177d |
| A75390 |  | Pipe Laying | 8d | 2026-05-28 | 2026-06-06 | A75380 | 177d |
| A75400 |  | Install Manhole | 4d | 2026-05-28 | 2026-06-01 | A75380 | 183d |
| A75410 |  | Testing & Inspection | 2d | 2026-06-07 | 2026-06-08 | A75390 | 177d |
| A75420 |  | Backfilling & Compaction | 10d | 2026-10-13 | 2026-10-24 | A75410, A75400, A75470 | 69d |
|  | MH-13-O-2 /MH-13-O-1 | **MH-13-O-2 /MH-13-O-1** |  | 2026-05-19 | 2026-10-12 |  |  |
| A75430 |  | Excavation | 4d | 2026-05-19 | 2026-05-23 | A75480, A1890 | 171d |
| A75440 |  | Pipe Laying | 8d | 2026-05-24 | 2026-06-01 | A75430 | 171d |
| A75450 |  | Install Manhole | 4d | 2026-05-24 | 2026-05-27 | A75430 | 177d |
| A75460 |  | Testing & Inspection | 2d | 2026-06-02 | 2026-06-03 | A75440 | 171d |
| A75470 |  | Backfilling & Compaction | 10d | 2026-10-01 | 2026-10-12 | A75460, A75450, A75520 | 69d |
|  | MH-13-O-3 /MH-13-O-2 | **MH-13-O-3 /MH-13-O-2** |  | 2026-05-14 | 2026-09-30 |  |  |
| A75480 |  | Excavation | 4d | 2026-05-14 | 2026-05-18 | A75530, A1890 | 165d |
| A75490 |  | Pipe Laying | 8d | 2026-05-19 | 2026-05-27 | A75480 | 165d |
| A75500 |  | Install Manhole | 4d | 2026-05-19 | 2026-05-23 | A75480 | 171d |
| A75510 |  | Testing & Inspection | 2d | 2026-05-28 | 2026-05-30 | A75490 | 165d |
| A75520 |  | Backfilling & Compaction | 10d | 2026-09-20 | 2026-09-30 | A75510, A75500, A75570 | 69d |
|  | MH-13-O-4 /MH-13-O-3 | **MH-13-O-4 /MH-13-O-3** |  | 2026-05-10 | 2026-09-19 |  |  |
| A75530 |  | Excavation | 4d | 2026-05-10 | 2026-05-13 | A75580, A1890 | 159d |
| A75540 |  | Pipe Laying | 8d | 2026-05-14 | 2026-05-23 | A75530 | 159d |
| A75550 |  | Install Manhole | 4d | 2026-05-14 | 2026-05-18 | A75530 | 165d |
| A75560 |  | Testing & Inspection | 2d | 2026-05-24 | 2026-05-25 | A75540 | 159d |
| A75570 |  | Backfilling & Compaction | 10d | 2026-09-08 | 2026-09-19 | A75560, A75550, A75620 | 69d |
|  | MH-13-O-5 /MH-13-O-4 | **MH-13-O-5 /MH-13-O-4** |  | 2026-05-05 | 2026-09-07 |  |  |
| A75580 |  | Excavation | 4d | 2026-05-05 | 2026-05-09 | A75630, A1890 | 159d |
| A75590 |  | Pipe Laying | 8d | 2026-05-10 | 2026-05-18 | A75580 | 159d |
| A75600 |  | Install Manhole | 4d | 2026-05-10 | 2026-05-13 | A75580 | 165d |
| A75610 |  | Testing & Inspection | 2d | 2026-05-19 | 2026-05-20 | A75590 | 159d |
| A75620 |  | Backfilling & Compaction | 4d | 2026-09-03 | 2026-09-07 | A75610, A75600, A75670 | 69d |
|  | MH-13-O-6 /MH-13-O-5 | **MH-13-O-6 /MH-13-O-5** |  | 2026-04-30 | 2026-09-02 |  |  |
| A75630 |  | Excavation | 4d | 2026-04-30 | 2026-05-04 | A75730, A1890 | 153d |
| A75640 |  | Pipe Laying | 8d | 2026-05-05 | 2026-05-13 | A75630 | 153d |
| A75650 |  | Install Manhole | 4d | 2026-05-05 | 2026-05-09 | A75630 | 159d |
| A75660 |  | Testing & Inspection | 2d | 2026-05-14 | 2026-05-16 | A75640 | 153d |
| A75670 |  | Backfilling & Compaction | 10d | 2026-08-23 | 2026-09-02 | A75660, A75650, A75770 | 69d |
|  | MH-13-O-7 /MH-13-O-6 | **MH-13-O-7 /MH-13-O-6** |  | 2026-04-26 | 2026-08-22 |  |  |
| A75730 |  | Excavation | 4d | 2026-04-26 | 2026-04-29 | A75680, A1890 | 147d |
| A75740 |  | Pipe Laying | 8d | 2026-04-30 | 2026-05-09 | A75730 | 147d |
| A75750 |  | Install Manhole | 4d | 2026-04-30 | 2026-05-04 | A75730 | 153d |
| A75760 |  | Testing & Inspection | 2d | 2026-05-10 | 2026-05-11 | A75740 | 147d |
| A75770 |  | Backfilling & Compaction | 10d | 2026-08-11 | 2026-08-22 | A75760, A75750, A75720 | 69d |
|  | MH-2-O /MH-3-O | **MH-2-O /MH-3-O** |  | 2026-03-05 | 2026-04-15 |  |  |
| A75980 |  | Excavation | 4d | 2026-03-05 | 2026-03-09 | A75930, A1890 | 81d |
| A75990 |  | Pipe Laying | 8d | 2026-03-10 | 2026-03-18 | A75980 | 81d |
| A76000 |  | Install Manhole | 4d | 2026-03-10 | 2026-03-14 | A75980 | 87d |
| A76010 |  | Testing & Inspection | 2d | 2026-03-19 | 2026-03-21 | A75990 | 81d |
| A76020 |  | Backfilling & Compaction | 10d | 2026-04-05 | 2026-04-15 | A76010, A76000, A75970 | 69d |
|  | MH-3-O /MH-4-O | **MH-3-O /MH-4-O** |  | 2026-03-10 | 2026-04-27 |  |  |
| A76030 |  | Excavation | 4d | 2026-03-10 | 2026-03-14 | A75980, A1890 | 91d |
| A76040 |  | Pipe Laying | 4d | 2026-03-15 | 2026-03-18 | A76030 | 91d |
| A76050 |  | Install Manhole | 4d | 2026-03-15 | 2026-03-18 | A76030 | 93d |
| A76060 |  | Testing & Inspection | 2d | 2026-03-19 | 2026-03-21 | A76040 | 91d |
| A76070 |  | Backfilling & Compaction | 10d | 2026-04-16 | 2026-04-27 | A76060, A76050, A76020 | 69d |
|  | MH-4-O /MH-5-O | **MH-4-O /MH-5-O** |  | 2026-03-15 | 2026-05-09 |  |  |
| A76080 |  | Excavation | 4d | 2026-03-15 | 2026-03-18 | A76030, A1890 | 93d |
| A76090 |  | Pipe Laying | 8d | 2026-03-19 | 2026-03-28 | A76080 | 93d |
| A76100 |  | Install Manhole | 4d | 2026-03-19 | 2026-03-23 | A76080 | 99d |
| A76110 |  | Testing & Inspection | 2d | 2026-03-29 | 2026-03-30 | A76090 | 93d |
| A76120 |  | Backfilling & Compaction | 10d | 2026-04-28 | 2026-05-09 | A76110, A76100, A76070 | 69d |
|  | MH-5-M-2 /MH-5-M-1 | **MH-5-M-2 /MH-5-M-1** |  | 2026-02-24 | 2026-03-23 |  |  |
| A75880 |  | Excavation | 4d | 2026-02-24 | 2026-02-28 | A75830, A1890 | 75d |

| ID | WBS | Task | Duration | Start | Finish | Predecessors | Total float |
| --- | --- | --- | --- | --- | --- | --- | --- |
| A75890 |  | Pipe Laying | 8d | 2026-03-01 | 2026-03-09 | A75880 | 75d |
| A75900 |  | Install Manhole | 4d | 2026-03-01 | 2026-03-04 | A75880 | 81d |
| A75910 |  | Testing & Inspection | 2d | 2026-03-10 | 2026-03-11 | A75890 | 75d |
| A75920 |  | Backfilling & Compaction | 4d | 2026-03-19 | 2026-03-23 | A75910, A75900, A75870 | 69d |
|  | MH-5-M-3 /MH-5-M-2 | **MH-5-M-3 /MH-5-M-2** |  | 2026-02-19 | 2026-03-18 |  |  |
| A75830 |  | Excavation | 4d | 2026-02-19 | 2026-02-23 | A66630, A66640, A1890 | 69d |
| A75840 |  | Pipe Laying | 8d | 2026-02-24 | 2026-03-04 | A75830 | 69d |
| A75850 |  | Install Manhole | 4d | 2026-02-24 | 2026-02-28 | A75830 | 75d |
| A75860 |  | Testing & Inspection | 2d | 2026-03-05 | 2026-03-07 | A75840 | 69d |
| A75870 |  | Backfilling & Compaction | 10d | 2026-03-08 | 2026-03-18 | A75860, A75850 | 69d |
|  | MH-5-O /MH-6-O | **MH-5-O /MH-6-O** |  | 2026-03-19 | 2026-05-20 |  |  |
| A76130 |  | Excavation | 4d | 2026-03-19 | 2026-03-23 | A76080, A1890 | 99d |
| A76140 |  | Pipe Laying | 8d | 2026-03-24 | 2026-04-01 | A76130 | 99d |
| A76150 |  | Install Manhole | 4d | 2026-03-24 | 2026-03-28 | A76130 | 105d |
| A76160 |  | Testing & Inspection | 2d | 2026-04-02 | 2026-04-04 | A76140 | 99d |
| A76170 |  | Backfilling & Compaction | 10d | 2026-05-10 | 2026-05-20 | A76160, A76150, A76120 | 69d |
|  | MH-6-O /MH-10-O | **MH-6-O /MH-10-O** |  | 2026-04-12 | 2026-07-18 |  |  |
| A76380 |  | Excavation | 4d | 2026-04-12 | 2026-04-15 | A76430, A1890 | 129d |
| A76390 |  | Pipe Laying | 8d | 2026-04-16 | 2026-04-25 | A76380 | 129d |
| A76400 |  | Install Manhole | 4d | 2026-04-16 | 2026-04-20 | A76380 | 135d |
| A76410 |  | Testing & Inspection | 2d | 2026-04-26 | 2026-04-27 | A76390 | 129d |
| A76420 |  | Backfilling & Compaction | 10d | 2026-07-07 | 2026-07-18 | A76410, A76400, A76470 | 69d |
|  | MH-6-O /MH-7-O | **MH-6-O /MH-7-O** |  | 2026-03-24 | 2026-06-01 |  |  |
| A76180 |  | Excavation | 4d | 2026-03-24 | 2026-03-28 | A76130, A1890 | 105d |
| A76190 |  | Pipe Laying | 8d | 2026-03-29 | 2026-04-06 | A76180 | 105d |
| A76200 |  | Install Manhole | 4d | 2026-03-29 | 2026-04-01 | A76180 | 111d |
| A76210 |  | Testing & Inspection | 2d | 2026-04-07 | 2026-04-08 | A76190 | 105d |
| A76220 |  | Backfilling & Compaction | 10d | 2026-05-21 | 2026-06-01 | A76210, A76200, A76170 | 69d |
|  | MH-7-O /MH-8-O | **MH-7-O /MH-8-O** |  | 2026-03-29 | 2026-06-13 |  |  |
| A76230 |  | Excavation | 4d | 2026-03-29 | 2026-04-01 | A76180, A1890 | 111d |
| A76240 |  | Pipe Laying | 8d | 2026-04-02 | 2026-04-11 | A76230 | 111d |
| A76250 |  | Install Manhole | 4d | 2026-04-02 | 2026-04-06 | A76230 | 117d |
| A76260 |  | Testing & Inspection | 2d | 2026-04-12 | 2026-04-13 | A76240 | 111d |
| A76270 |  | Backfilling & Compaction | 10d | 2026-06-02 | 2026-06-13 | A76260, A76250, A76220 | 69d |
|  | MH-8-O /MH-9-O | **MH-8-O /MH-9-O** |  | 2026-04-02 | 2026-06-24 |  |  |
| A76280 |  | Excavation | 4d | 2026-04-02 | 2026-04-06 | A76230, A1890 | 117d |
| A76290 |  | Pipe Laying | 8d | 2026-04-07 | 2026-04-15 | A76280 | 117d |
| A76300 |  | Install Manhole | 4d | 2026-04-07 | 2026-04-11 | A76280 | 123d |
| A76310 |  | Testing & Inspection | 2d | 2026-04-16 | 2026-04-18 | A76290 | 117d |
| A76320 |  | Backfilling & Compaction | 10d | 2026-06-14 | 2026-06-24 | A76310, A76300, A76270 | 69d |
|  | MH-9-O /MH-6-O | **MH-9-O /MH-6-O** |  | 2026-04-07 | 2026-07-06 |  |  |
| A76430 |  | Excavation | 4d | 2026-04-07 | 2026-04-11 | A1890, A76280 | 123d |
| A76440 |  | Pipe Laying | 8d | 2026-04-12 | 2026-04-20 | A76430 | 123d |
| A76450 |  | Install Manhole | 4d | 2026-04-12 | 2026-04-15 | A76430 | 129d |
| A76460 |  | Testing & Inspection | 2d | 2026-04-21 | 2026-04-22 | A76440 | 123d |
| A76470 |  | Backfilling & Compaction | 10d | 2026-06-25 | 2026-07-06 | A76460, A76450, A76320, A76280, A1890 | 69d |
|  | LR 27 | **LR 27** |  | 2026-02-23 | 2026-04-02 |  |  |
|  | MH-7-M-1 /MH-7-M | **MH-7-M-1 /MH-7-M** |  | 2026-02-23 | 2026-03-15 |  |  |
| A75330 |  | Excavation | 4d | 2026-02-23 | 2026-02-26 | A66660, A66670, A1890 | 5d |
| A75340 |  | Pipe Laying | 8d | 2026-02-28 | 2026-03-08 | A75330 | 66d |
| A75350 |  | Install Manhole | 4d | 2026-02-28 | 2026-03-03 | A75330 | 72d |
| A75360 |  | Testing & Inspection | 2d | 2026-03-09 | 2026-03-10 | A75340 | 66d |
| A75370 |  | Backfilling & Compaction | 4d | 2026-03-11 | 2026-03-15 | A75360, A75350 | 66d |
|  | MH-8-O-2 /MH-8-O-0 | **MH-8-O-2 /MH-8-O-0** |  | 2026-03-14 | 2026-04-02 |  |  |
| A75130 |  | Excavation | 4d | 2026-03-14 | 2026-03-17 | A75180, A1890 | 5d |
| A75140 |  | Pipe Laying | 8d | 2026-03-18 | 2026-03-26 | A75130 | 147d |
| A75150 |  | Install Manhole | 4d | 2026-03-18 | 2026-03-22 | A75130 | 153d |
| A75160 |  | Testing & Inspection | 2d | 2026-03-28 | 2026-03-29 | A75140 | 147d |
| A75170 |  | Backfilling & Compaction | 4d | 2026-03-30 | 2026-04-02 | A75160, A75150, A75220 | 147d |
|  | MH-8-O-3 /MH-8-O-1 | **MH-8-O-3 /MH-8-O-1** |  | 2026-03-09 | 2026-03-29 |  |  |
| A75180 |  | Excavation | 4d | 2026-03-09 | 2026-03-12 | A75230, A1890 | 5d |
| A75190 |  | Pipe Laying | 4d | 2026-03-14 | 2026-03-17 | A75180 | 151d |
| A75200 |  | Install Manhole | 4d | 2026-03-14 | 2026-03-17 | A75180 | 153d |
| A75210 |  | Testing & Inspection | 2d | 2026-03-18 | 2026-03-19 | A75190 | 151d |
| A75220 |  | Backfilling & Compaction | 4d | 2026-03-25 | 2026-03-29 | A75210, A75200, A75270 | 147d |
|  | MH-8-O-4 /MH-8-O-2 | **MH-8-O-4 /MH-8-O-2** |  | 2026-03-04 | 2026-03-24 |  |  |
| A75230 |  | Excavation | 4d | 2026-03-04 | 2026-03-08 | A75280, A1890 | 5d |
| A75240 |  | Pipe Laying | 4d | 2026-03-09 | 2026-03-12 | A75230 | 151d |
| A75250 |  | Install Manhole | 4d | 2026-03-09 | 2026-03-12 | A75230 | 153d |
| A75260 |  | Testing & Inspection | 2d | 2026-03-14 | 2026-03-15 | A75240 | 151d |

| ID | WBS | Task | Duration | Start | Finish | Predecessors | Total float |
| --- | --- | --- | --- | --- | --- | --- | --- |
| A75270 |  | Backfilling & Compaction | 4d | 2026-03-21 | 2026-03-24 | A75260, A75250, A75320 | 147d |
|  | MH-8-O-4 /MH-8-O-3 | **MH-8-O-4 /MH-8-O-3** |  | 2026-02-28 | 2026-03-19 |  |  |
| A75280 |  | Excavation | 4d | 2026-02-28 | 2026-03-03 | A75330, A1890 | 5d |
| A75290 |  | Pipe Laying | 8d | 2026-03-04 | 2026-03-12 | A75280 | 147d |
| A75300 |  | Install Manhole | 4d | 2026-03-04 | 2026-03-08 | A75280 | 153d |
| A75310 |  | Testing & Inspection | 2d | 2026-03-14 | 2026-03-15 | A75290 | 147d |
| A75320 |  | Backfilling & Compaction | 4d | 2026-03-16 | 2026-03-19 | A75310, A75300, A75370 | 147d |
|  | MVN | **MV NETWORK** |  | 2026-07-01 | 2026-09-15 |  |  |
|  | 1 | **PSS 8714 - loop 01 Zone B** |  | 2026-07-01 | 2026-09-15 |  |  |
| A86130 |  | Trenching & excavation | 8d | 2026-07-01 | 2026-07-09 | A56660, A57780 | 0d |
| A86140 |  | Bedding preparation (sand) | 14d | 2026-07-06 | 2026-07-21 | A86130 SS+4d | 14d |
| A86150 |  | Duct installation / concrete encasement | 18d | 2026-07-11 | 2026-07-30 | A86140 SS+4d, A86140 FF+4d | 14d |
| A86170 |  | Cable Laying | 21d | 2026-08-01 | 2026-08-24 | A86150 SS+4d, A86150 FF+4d, A10720 | 0d |
| A86160 |  | Backfilling & compaction | 21d | 2026-08-05 | 2026-08-29 | A86170 SS+4d, A86170 FF+4d | 0d |
| A86190 |  | RMU / transformer installation | 10d | 2026-08-30 | 2026-09-09 | A86160, A10710 | 0d |
| A86180 |  | Testing | 5d | 2026-09-10 | 2026-09-15 | A86190 | 0d |
|  | 4 | **PSS 8714 - loop 02 Zone B** |  | 2026-07-11 | 2026-09-15 |  |  |
| A86200 |  | Trenching & excavation | 7d | 2026-07-11 | 2026-07-18 | A86130 | 0d |
| A86210 |  | Bedding preparation (sand) | 14d | 2026-07-15 | 2026-07-30 | A86200 SS+4d | 6d |
| A86220 |  | Duct installation / concrete encasement | 18d | 2026-07-20 | 2026-08-09 | A86210 SS+4d, A86210 FF+4d | 6d |
| A86240 |  | Cable Laying | 21d | 2026-08-01 | 2026-08-24 | A86220 SS+4d, A86220 FF+4d, A10720 | 0d |
| A86230 |  | Backfilling & compaction | 21d | 2026-08-05 | 2026-08-29 | A86240 SS+4d, A86240 FF+4d | 0d |
| A86260 |  | RMU / transformer installation | 10d | 2026-08-30 | 2026-09-09 | A86230, A10710 | 0d |
| A86250 |  | Testing | 5d | 2026-09-10 | 2026-09-15 | A86260 | 0d |
|  | 5 | **PSS 8714 - loop 03 Zone B** |  | 2026-07-19 | 2026-09-15 |  |  |
| A86270 |  | Trenching & excavation | 4d | 2026-07-19 | 2026-07-22 | A86200 | 0d |
| A86280 |  | Bedding preparation (sand) | 14d | 2026-07-23 | 2026-08-08 | A86270 SS+4d | 0d |
| A86290 |  | Duct installation / concrete encasement | 18d | 2026-07-28 | 2026-08-17 | A86280 SS+4d, A86280 FF+4d | 0d |
| A86310 |  | Cable Laying | 21d | 2026-08-02 | 2026-08-25 | A86290 SS+4d, A86290 FF+4d, A10720 | 0d |
| A86300 |  | Backfilling & compaction | 21d | 2026-08-06 | 2026-08-30 | A86310 SS+4d, A86310 FF+4d | 0d |
| A86330 |  | RMU / transformer installation | 10d | 2026-08-31 | 2026-09-10 | A86300, A10710 | 0d |
| A86320 |  | Testing | 4d | 2026-09-12 | 2026-09-15 | A86330 | 0d |
|  | 6 | **PSS 8714 - loop 04 Zone B** |  | 2026-07-23 | 2026-09-15 |  |  |
| A86340 |  | Trenching & excavation | 4d | 2026-07-23 | 2026-07-27 | A86270 | 0d |
| A86350 |  | Bedding preparation (sand) | 8d | 2026-07-28 | 2026-08-05 | A86340 SS+4d | 0d |
| A86360 |  | Duct installation / concrete encasement | 8d | 2026-08-02 | 2026-08-10 | A86350 SS+4d, A86350 FF+4d | 0d |
| A86380 |  | Cable Laying | 21d | 2026-08-06 | 2026-08-30 | A86360 SS+4d, A86360 FF+4d, A10720 | 0d |
| A86370 |  | Backfilling & compaction | 14d | 2026-08-19 | 2026-09-03 | A86380 SS+4d, A86340, A86380 FF+4d | 0d |
| A86400 |  | RMU / transformer installation | 5d | 2026-09-05 | 2026-09-09 | A86370, A10710 | 0d |
| A86390 |  | Testing | 5d | 2026-09-10 | 2026-09-15 | A86400 | 0d |
|  | ZB | **POTABLE NETWORK** |  | 2026-09-24 | 2027-01-13 |  |  |
|  | R1 | **Road 18** |  | 2026-09-24 | 2026-12-09 |  |  |
| A87810 |  | Road Crossing Works | 16d | 2026-09-24 | 2026-10-12 | A51140, A58910 | 30d |
| A87800 |  | Trenching & Bedding | 14d | 2026-09-27 | 2026-10-12 | A87810 SS, A87810 FF | 30d |
| A87820 |  | Pipe Laying | 18d | 2026-10-06 | 2026-10-26 | A87800 SS+8d, A87810 SS+8d, A87810 FF+8d | 30d |
| A87830 |  | Testing | 4d | 2026-10-27 | 2026-10-31 | A87820, A87820 FF | 30d |
| A87840 |  | Backfilling & Compaction | 16d | 2026-11-01 | 2026-11-18 | A87830, A87830 FF | 30d |
| A87850 |  | Chambers Construction works | 16d | 2026-11-01 | 2026-11-18 | A87830 | 30d |
| A87860 |  | Valves & Fittings Installation | 18d | 2026-11-19 | 2026-12-09 | A87850, A87840 | 30d |
|  | R11 | **Road 19** |  | 2026-09-24 | 2026-12-09 |  |  |
| A87880 |  | Road Crossing Works | 16d | 2026-09-24 | 2026-10-12 | A51290, A58910 | 30d |
| A87870 |  | Trenching & Bedding | 14d | 2026-09-27 | 2026-10-12 | A87880 SS, A87880 FF | 30d |
| A87890 |  | Pipe Laying | 18d | 2026-10-06 | 2026-10-26 | A87870 SS+8d, A87880 SS+8d, A87880 FF+8d | 30d |
| A87900 |  | Testing | 4d | 2026-10-27 | 2026-10-31 | A87890, A87890 FF | 30d |
| A87910 |  | Backfilling & Compaction | 16d | 2026-11-01 | 2026-11-18 | A87900, A87900 FF | 30d |
| A87920 |  | Chambers Construction works | 16d | 2026-11-01 | 2026-11-18 | A87900 | 30d |
| A87930 |  | Valves & Fittings Installation | 18d | 2026-11-19 | 2026-12-09 | A87920, A87910 | 30d |
|  | R12 | **Road 20** |  | 2026-09-24 | 2026-12-09 |  |  |
| A87950 |  | Road Crossing Works | 16d | 2026-09-24 | 2026-10-12 | A51490, A58910 | 30d |
| A87940 |  | Trenching & Bedding | 14d | 2026-09-27 | 2026-10-12 | A87950 SS, A87950 FF | 30d |
| A87960 |  | Pipe Laying | 18d | 2026-10-06 | 2026-10-26 | A87940 SS+8d, A87950 SS+8d, A87950 FF+8d | 30d |
| A87970 |  | Testing | 4d | 2026-10-27 | 2026-10-31 | A87960, A87960 FF | 30d |
| A87980 |  | Backfilling & Compaction | 16d | 2026-11-01 | 2026-11-18 | A87970, A87970 FF | 30d |
| A87990 |  | Chambers Construction works | 16d | 2026-11-01 | 2026-11-18 | A87970 | 30d |
| A88000 |  | Valves & Fittings Installation | 18d | 2026-11-19 | 2026-12-09 | A87990, A87980 | 30d |
|  | R13 | **Road 21** |  | 2026-09-24 | 2026-12-09 |  |  |
| A88020 |  | Road Crossing Works | 16d | 2026-09-24 | 2026-10-12 | A51690, A58910 | 30d |
| A88010 |  | Trenching & Bedding | 14d | 2026-09-27 | 2026-10-12 | A88020 SS, A88020 FF | 30d |
| A88030 |  | Pipe Laying | 18d | 2026-10-06 | 2026-10-26 | A88010 SS+8d, A88020 SS+8d, A88020 FF+8d | 30d |
| A88040 |  | Testing | 4d | 2026-10-27 | 2026-10-31 | A88030, A88030 FF | 30d |

| ID | WBS | Task | Duration | Start | Finish | Predecessors | Total float |
| --- | --- | --- | --- | --- | --- | --- | --- |
| A88050 |  | Backfilling & Compaction | 16d | 2026-11-01 | 2026-11-18 | A88040, A88040 FF | 30d |
| A88060 |  | Chambers Construction works | 16d | 2026-11-01 | 2026-11-18 | A88040 | 30d |
| A88070 |  | Valves & Fittings Installation | 18d | 2026-11-19 | 2026-12-09 | A88060, A88050 | 30d |
|  | R14 | **Road 22** |  | 2026-09-24 | 2026-12-09 |  |  |
| A88090 |  | Road Crossing Works | 16d | 2026-09-24 | 2026-10-12 | A51990, A58910 | 16d |
| A88080 |  | Trenching & Bedding | 14d | 2026-09-27 | 2026-10-12 | A88090 SS, A88090 FF | 16d |
| A88100 |  | Pipe Laying | 18d | 2026-10-06 | 2026-10-26 | A88080 SS+8d, A88090 SS+8d, A88090 FF+8d | 30d |
| A88110 |  | Testing | 4d | 2026-10-27 | 2026-10-31 | A88100, A88100 FF | 30d |
| A88120 |  | Backfilling & Compaction | 16d | 2026-11-01 | 2026-11-18 | A88110, A88110 FF | 30d |
| A88130 |  | Chambers Construction works | 16d | 2026-11-01 | 2026-11-18 | A88110 | 30d |
| A88140 |  | Valves & Fittings Installation | 18d | 2026-11-19 | 2026-12-09 | A88130, A88120 | 30d |
|  | R15 | **Road 23** |  | 2026-09-24 | 2026-12-26 |  |  |
| A88580 |  | Road Crossing Works | 16d | 2026-09-24 | 2026-10-12 | A52290, A58910 | 30d |
| A88570 |  | Trenching & Bedding | 14d | 2026-10-13 | 2026-10-28 | A88580 SS, A88080, A88580 FF | 16d |
| A88590 |  | Pipe Laying | 18d | 2026-10-22 | 2026-11-11 | A88570 SS+8d, A88580 SS+8d, A88580 FF+8d | 16d |
| A88600 |  | Testing | 4d | 2026-11-12 | 2026-11-16 | A88590, A88590 FF | 16d |
| A88610 |  | Backfilling & Compaction | 16d | 2026-11-17 | 2026-12-05 | A88600, A88600 FF | 16d |
| A88620 |  | Chambers Construction works | 16d | 2026-11-17 | 2026-12-05 | A88600 | 16d |
| A88630 |  | Valves & Fittings Installation | 18d | 2026-12-06 | 2026-12-26 | A88620, A88610 | 16d |
|  | R16 | **Road 24** |  | 2026-09-24 | 2026-12-09 |  |  |
| A88510 |  | Road Crossing Works | 16d | 2026-09-24 | 2026-10-12 | A52690, A58910 | 30d |
| A88500 |  | Trenching & Bedding | 14d | 2026-09-27 | 2026-10-12 | A88510 SS, A88510 FF | 30d |
| A88520 |  | Pipe Laying | 18d | 2026-10-06 | 2026-10-26 | A88500 SS+8d, A88510 SS+8d, A88510 FF+8d | 30d |
| A88530 |  | Testing | 4d | 2026-10-27 | 2026-10-31 | A88520, A88520 FF | 30d |
| A88540 |  | Backfilling & Compaction | 16d | 2026-11-01 | 2026-11-18 | A88530, A88530 FF | 30d |
| A88550 |  | Chambers Construction works | 16d | 2026-11-01 | 2026-11-18 | A88530 | 30d |
| A88560 |  | Valves & Fittings Installation | 18d | 2026-11-19 | 2026-12-09 | A88550, A88540 | 30d |
|  | R17 | **Road 25** |  | 2026-09-24 | 2026-12-09 |  |  |
| A88440 |  | Road Crossing Works | 16d | 2026-09-24 | 2026-10-12 | A53040, A58910 | 30d |
| A88430 |  | Trenching & Bedding | 14d | 2026-09-27 | 2026-10-12 | A88440 SS, A88440 FF | 30d |
| A88450 |  | Pipe Laying | 18d | 2026-10-06 | 2026-10-26 | A88430 SS+8d, A88440 SS+8d, A88440 FF+8d | 30d |
| A88460 |  | Testing | 4d | 2026-10-27 | 2026-10-31 | A88450, A88450 FF | 30d |
| A88470 |  | Backfilling & Compaction | 16d | 2026-11-01 | 2026-11-18 | A88460, A88460 FF | 30d |
| A88480 |  | Chambers Construction works | 16d | 2026-11-01 | 2026-11-18 | A88460 | 30d |
| A88490 |  | Valves & Fittings Installation | 18d | 2026-11-19 | 2026-12-09 | A88480, A88470 | 30d |
|  | R18 | **Road 26** |  | 2026-10-29 | 2027-01-13 |  |  |
| A88370 |  | Road Crossing Works | 16d | 2026-10-29 | 2026-11-16 | A58910, A54390 | 0d |
| A88360 |  | Trenching & Bedding | 14d | 2026-11-01 | 2026-11-16 | A88370 SS, A88370 FF | 0d |
| A88380 |  | Pipe Laying | 18d | 2026-11-10 | 2026-11-30 | A88360 SS+8d, A88370 SS+8d, A88370 FF+8d | 0d |
| A88390 |  | Testing | 4d | 2026-12-01 | 2026-12-05 | A88380, A88380 FF | 0d |
| A88400 |  | Backfilling & Compaction | 16d | 2026-12-06 | 2026-12-23 | A88390, A88390 FF | 0d |
| A88410 |  | Chambers Construction works | 16d | 2026-12-06 | 2026-12-23 | A88390 | 0d |
| A88420 |  | Valves & Fittings Installation | 18d | 2026-12-24 | 2027-01-13 | A88410, A88400 | 0d |
|  | R19 | **Road 27** |  | 2026-09-24 | 2026-11-25 |  |  |
| A88300 |  | Road Crossing Works | 8d | 2026-09-24 | 2026-10-03 | A55790, A58910 | 2d |
| A88290 |  | Trenching & Bedding | 6d | 2026-09-27 | 2026-10-03 | A88300 SS, A88300 FF | 42d |
| A88310 |  | Pipe Laying | 6d | 2026-10-06 | 2026-10-12 | A88290 SS+8d, A88300 SS+8d, A88300 FF+8d | 42d |
| A88320 |  | Testing | 4d | 2026-10-13 | 2026-10-17 | A88310, A88310 FF | 42d |
| A88330 |  | Backfilling & Compaction | 6d | 2026-10-18 | 2026-10-24 | A88320, A88320 FF | 88d |
| A88340 |  | Chambers Construction works | 16d | 2026-10-18 | 2026-11-04 | A88320 | 42d |
| A88350 |  | Valves & Fittings Installation | 18d | 2026-11-05 | 2026-11-25 | A88340 | 42d |
|  | R110 | **Collector 2** |  | 2026-10-04 | 2026-12-16 |  |  |
| A88220 |  | Trenching & Bedding | 8d | 2026-10-04 | 2026-10-12 | A88230 SS, A58910 | 24d |
| A88230 |  | Road Crossing Works | 8d | 2026-10-04 | 2026-10-12 | A78270, A88300 | 2d |
| A88240 |  | Pipe Laying | 18d | 2026-10-13 | 2026-11-02 | A88220 SS+8d, A88230 SS+8d | 24d |
| A88250 |  | Testing | 4d | 2026-11-03 | 2026-11-07 | A88240, A88240 FF | 24d |
| A88260 |  | Backfilling & Compaction | 16d | 2026-11-08 | 2026-11-25 | A88250, A88250 FF | 24d |
| A88270 |  | Chambers Construction works | 16d | 2026-11-08 | 2026-11-25 | A88250 | 24d |
| A88280 |  | Valves & Fittings Installation | 18d | 2026-11-26 | 2026-12-16 | A88270, A88260 | 24d |
|  | R111 | **Arterial 1** |  | 2026-10-13 | 2026-12-26 |  |  |
| A88150 |  | Trenching & Bedding | 8d | 2026-10-13 | 2026-10-21 | A88160 SS, A88160 FF | 2d |
| A88160 |  | Road Crossing Works | 8d | 2026-10-13 | 2026-10-21 | A88230, A58910 | 2d |
| A88170 |  | Pipe Laying | 18d | 2026-10-22 | 2026-11-11 | A88150 SS+8d, A88160 SS+8d, A88160 FF+8d | 16d |
| A88180 |  | Testing | 4d | 2026-11-12 | 2026-11-16 | A88170, A88170 FF | 16d |
| A88190 |  | Backfilling & Compaction | 16d | 2026-11-17 | 2026-12-05 | A88180, A88180 FF | 16d |
| A88200 |  | Chambers Construction works | 16d | 2026-11-17 | 2026-12-05 | A88180 | 16d |
| A88210 |  | Valves & Fittings Installation | 18d | 2026-12-06 | 2026-12-26 | A88200, A88190 | 16d |
|  | Zone B | **SEWEGE NETWORK** |  | 2026-03-04 | 2027-01-19 |  |  |
|  | AR 01 | **AR 01** |  | 2026-05-12 | 2026-07-21 |  |  |
|  | MH-3.10 / MH-3.11 | **MH-3.10 / MH-3.11** |  | 2026-05-12 | 2026-07-07 |  |  |

| ID | WBS | Task | Duration | Start | Finish | Predecessors | Total float |
| --- | --- | --- | --- | --- | --- | --- | --- |
| A49900 |  | Excavation | 4d | 2026-05-12 | 2026-05-16 | A67120, A68070, A55750, A1990 | 56d |
| A49910 |  | Pipe Laying | 8d | 2026-05-17 | 2026-05-25 | A49900 | 64d |
| A49930 |  | Testing & Inspection | 2d | 2026-05-26 | 2026-05-27 | A49910 | 64d |
| A49920 |  | Install Manhole | 4d | 2026-06-29 | 2026-07-02 | A49900, A10230 | 33d |
| A49940 |  | Backfilling & Compaction | 4d | 2026-07-04 | 2026-07-07 | A49930, A49920 | 33d |
|  | MH-3.7 / MH-3.8 | **MH-3.7 / MH-3.8** |  | 2026-05-17 | 2026-07-12 |  |  |
| A49950 |  | Excavation | 4d | 2026-05-17 | 2026-05-20 | A49900, A1990 | 56d |
| A49960 |  | Pipe Laying | 8d | 2026-05-21 | 2026-05-30 | A49950 | 64d |
| A49980 |  | Testing & Inspection | 2d | 2026-05-31 | 2026-06-01 | A49960 | 64d |
| A49970 |  | Install Manhole | 4d | 2026-06-29 | 2026-07-02 | A49950, A10230 | 37d |
| A49990 |  | Backfilling & Compaction | 4d | 2026-07-08 | 2026-07-12 | A49980, A49970, A49940 | 33d |
|  | MH-3.8 / MH-3.9 | **MH-3.8 / MH-3.9** |  | 2026-05-21 | 2026-07-16 |  |  |
| A50000 |  | Excavation | 4d | 2026-05-21 | 2026-05-25 | A49950, A1990 | 56d |
| A50010 |  | Pipe Laying | 8d | 2026-05-26 | 2026-06-03 | A50000 | 64d |
| A50030 |  | Testing & Inspection | 2d | 2026-06-04 | 2026-06-06 | A50010 | 64d |
| A50020 |  | Install Manhole | 4d | 2026-06-29 | 2026-07-02 | A50000, A10230 | 41d |
| A50040 |  | Backfilling & Compaction | 4d | 2026-07-13 | 2026-07-16 | A50030, A50020, A49990 | 33d |
|  | MH-3.9 / MH-3.10 | **MH-3.9 / MH-3.10** |  | 2026-05-26 | 2026-07-21 |  |  |
| A50050 |  | Excavation | 4d | 2026-05-26 | 2026-05-30 | A50000, A50000 FF, A1990 | 56d |
| A50060 |  | Pipe Laying | 8d | 2026-05-31 | 2026-06-08 | A50050 | 64d |
| A50080 |  | Testing & Inspection | 2d | 2026-06-09 | 2026-06-10 | A50060 | 64d |
| A50070 |  | Install Manhole | 4d | 2026-06-29 | 2026-07-02 | A50050, A10230 | 45d |
| A50090 |  | Backfilling & Compaction | 4d | 2026-07-18 | 2026-07-21 | A50080, A50070, A50040 | 33d |
|  | EX LR 19 | **EX LR 19** |  | 2026-05-31 | 2026-07-16 |  |  |
|  | MH-3.42 / MH-3.43 | **MH-3.42 / MH-3.43** |  | 2026-05-31 | 2026-07-07 |  |  |
| A50100 |  | Excavation | 4d | 2026-05-31 | 2026-06-03 | A50050, A1990 | 56d |
| A50110 |  | Pipe Laying | 8d | 2026-06-04 | 2026-06-13 | A50100 | 56d |
| A50130 |  | Testing & Inspection | 2d | 2026-06-14 | 2026-06-15 | A50110 | 56d |
| A50120 |  | Install Manhole | 4d | 2026-06-29 | 2026-07-02 | A50100, A10230 | 41d |
| A50140 |  | Backfilling & Compaction | 4d | 2026-07-04 | 2026-07-07 | A50130, A50120 | 41d |
|  | MH-3.43 / MH-3.44 | **MH-3.43 / MH-3.44** |  | 2026-06-04 | 2026-07-12 |  |  |
| A50150 |  | Excavation | 4d | 2026-06-04 | 2026-06-08 | A50100, A1990 | 56d |
| A50160 |  | Pipe Laying | 8d | 2026-06-09 | 2026-06-17 | A50150 | 56d |
| A50180 |  | Testing & Inspection | 2d | 2026-06-18 | 2026-06-20 | A50160 | 56d |
| A50170 |  | Install Manhole | 4d | 2026-06-29 | 2026-07-02 | A50150, A10230 | 45d |
| A50190 |  | Backfilling & Compaction | 4d | 2026-07-08 | 2026-07-12 | A50180, A50170, A50140 | 41d |
|  | MH-3.44 / MH-3.45 | **MH-3.44 / MH-3.45** |  | 2026-06-09 | 2026-07-16 |  |  |
| A50200 |  | Excavation | 4d | 2026-06-09 | 2026-06-13 | A50150, A1990 | 56d |
| A50210 |  | Pipe Laying | 8d | 2026-06-14 | 2026-06-22 | A50200 | 56d |
| A50230 |  | Testing & Inspection | 2d | 2026-06-23 | 2026-06-24 | A50210 | 56d |
| A50220 |  | Install Manhole | 4d | 2026-06-29 | 2026-07-02 | A50200, A10230 | 49d |
| A50240 |  | Backfilling & Compaction | 4d | 2026-07-13 | 2026-07-16 | A50230, A50220, A50190 | 41d |
|  | EX LR 20 | **EX LR 20** |  | 2026-06-04 | 2026-08-09 |  |  |
|  | MH-3.36 / MH-3.37 | **MH-3.36 / MH-3.37** |  | 2026-06-04 | 2026-07-07 |  |  |
| A50250 |  | Excavation | 4d | 2026-06-04 | 2026-06-08 | A50100, A1990 | 60d |
| A50260 |  | Pipe Laying | 8d | 2026-06-09 | 2026-06-17 | A50250 | 60d |
| A50280 |  | Testing & Inspection | 2d | 2026-06-18 | 2026-06-20 | A50260 | 60d |
| A50270 |  | Install Manhole | 4d | 2026-06-29 | 2026-07-02 | A50250, A10230 | 49d |
| A50290 |  | Backfilling & Compaction | 4d | 2026-07-04 | 2026-07-07 | A50280, A50270 | 49d |
|  | MH-3.37 / MH-3.38 | **MH-3.37 / MH-3.38** |  | 2026-06-09 | 2026-07-21 |  |  |
| A50300 |  | Excavation | 4d | 2026-06-09 | 2026-06-13 | A50250, A1990 | 60d |
| A50310 |  | Pipe Laying | 8d | 2026-06-14 | 2026-06-22 | A50300 | 60d |
| A50330 |  | Testing & Inspection | 2d | 2026-06-23 | 2026-06-24 | A50310 | 60d |
| A50320 |  | Install Manhole | 4d | 2026-06-29 | 2026-07-02 | A50300, A10230 | 53d |
| A50340 |  | Backfilling & Compaction | 4d | 2026-07-18 | 2026-07-21 | A50330, A50320, A50290, A50240 | 41d |
|  | MH-3.38 / MH-3.39 | **MH-3.38 / MH-3.39** |  | 2026-06-14 | 2026-07-26 |  |  |
| A50350 |  | Excavation | 4d | 2026-06-14 | 2026-06-17 | A50300, A1990 | 60d |
| A50360 |  | Pipe Laying | 8d | 2026-06-18 | 2026-06-27 | A50350 | 60d |
| A50380 |  | Testing & Inspection | 2d | 2026-06-28 | 2026-06-29 | A50360 | 60d |
| A50370 |  | Install Manhole | 4d | 2026-06-29 | 2026-07-02 | A50350, A10230 | 57d |
| A50390 |  | Backfilling & Compaction | 4d | 2026-07-22 | 2026-07-26 | A50380, A50370, A50340 | 41d |
|  | MH-3.39 / MH-3.40 | **MH-3.39 / MH-3.40** |  | 2026-06-18 | 2026-07-30 |  |  |
| A50400 |  | Excavation | 4d | 2026-06-18 | 2026-06-22 | A50350, A1990 | 60d |
| A50410 |  | Pipe Laying | 8d | 2026-06-23 | 2026-07-01 | A50400 | 60d |
| A50420 |  | Install Manhole | 4d | 2026-06-29 | 2026-07-02 | A50400, A10230 | 61d |
| A50430 |  | Testing & Inspection | 2d | 2026-07-02 | 2026-07-04 | A50410 | 60d |
| A50440 |  | Backfilling & Compaction | 4d | 2026-07-27 | 2026-07-30 | A50430, A50420, A50390 | 41d |
|  | MH-3.40 / MH-3.41 | **MH-3.40 / MH-3.41** |  | 2026-06-23 | 2026-08-04 |  |  |
| A50450 |  | Excavation | 4d | 2026-06-23 | 2026-06-27 | A50400, A1990 | 60d |
| A50460 |  | Pipe Laying | 8d | 2026-06-28 | 2026-07-06 | A50450 | 60d |

| ID | WBS | Task | Duration | Start | Finish | Predecessors | Total float |
| --- | --- | --- | --- | --- | --- | --- | --- |
| A50470 |  | Install Manhole | 4d | 2026-06-29 | 2026-07-02 | A50450, A10230 | 65d |
| A50480 |  | Testing & Inspection | 2d | 2026-07-07 | 2026-07-08 | A50460 | 60d |
| A50490 |  | Backfilling & Compaction | 4d | 2026-08-01 | 2026-08-04 | A50480, A50470, A50440 | 41d |
|  | MH-3.41 / MH-3.42 | **MH-3.41 / MH-3.42** |  | 2026-06-28 | 2026-08-09 |  |  |
| A50500 |  | Excavation | 4d | 2026-06-28 | 2026-07-01 | A50450, A1990 | 60d |
| A50510 |  | Pipe Laying | 8d | 2026-07-02 | 2026-07-11 | A50500 | 60d |
| A50520 |  | Install Manhole | 4d | 2026-07-02 | 2026-07-06 | A50500, A10230 | 66d |
| A50530 |  | Testing & Inspection | 2d | 2026-07-12 | 2026-07-13 | A50510 | 60d |
| A50540 |  | Backfilling & Compaction | 4d | 2026-08-05 | 2026-08-09 | A50530, A50520, A50490 | 41d |
|  | EX LR 26 | **EX LR 26** |  | 2026-06-09 | 2026-07-07 |  |  |
|  | MH-3.11 / MH-3.12 | **MH-3.11 / MH-3.12** |  | 2026-06-09 | 2026-07-07 |  |  |
| A50550 |  | Excavation | 4d | 2026-06-09 | 2026-06-13 | A50250, A1990 | 64d |
| A50560 |  | Pipe Laying | 8d | 2026-06-14 | 2026-06-22 | A50550 | 64d |
| A50580 |  | Testing & Inspection | 2d | 2026-06-23 | 2026-06-24 | A50560 | 64d |
| A50570 |  | Install Manhole | 4d | 2026-06-29 | 2026-07-02 | A50550, A10230 | 57d |
| A50590 |  | Backfilling & Compaction | 4d | 2026-07-04 | 2026-07-07 | A50580, A50570 | 57d |
|  | Ex. AR 01 | **Ex. AR 01** |  | 2026-06-14 | 2026-08-27 |  |  |
|  | EX. MH Connection / MH-3.1 | **EX. MH Connection / MH-3.1** |  | 2026-06-14 | 2026-07-07 |  |  |
| A50600 |  | Excavation | 4d | 2026-06-14 | 2026-06-17 | A50550, A1990 | 64d |
| A50610 |  | Pipe Laying | 8d | 2026-06-18 | 2026-06-27 | A50600 | 64d |
| A50630 |  | Testing & Inspection | 2d | 2026-06-28 | 2026-06-29 | A50610 | 64d |
| A50620 |  | Install Manhole | 4d | 2026-06-29 | 2026-07-02 | A50600, A10230 | 61d |
| A50640 |  | Backfilling & Compaction | 4d | 2026-07-04 | 2026-07-07 | A50630, A50620 | 61d |
|  | MH-3.1 / MH-3.2 | **MH-3.1 / MH-3.2** |  | 2026-06-18 | 2026-07-12 |  |  |
| A50650 |  | Excavation | 4d | 2026-06-18 | 2026-06-22 | A50600, A1990 | 64d |
| A50660 |  | Pipe Laying | 8d | 2026-06-23 | 2026-07-01 | A50650 | 64d |
| A50670 |  | Install Manhole | 4d | 2026-06-29 | 2026-07-02 | A50650, A10230 | 65d |
| A50680 |  | Testing & Inspection | 2d | 2026-07-02 | 2026-07-04 | A50660 | 64d |
| A50690 |  | Backfilling & Compaction | 4d | 2026-07-08 | 2026-07-12 | A50680, A50670, A50640 | 61d |
|  | MH-3.2 / MH-3.3 | **MH-3.2 / MH-3.3** |  | 2026-06-23 | 2026-07-16 |  |  |
| A50700 |  | Excavation | 4d | 2026-06-23 | 2026-06-27 | A50650, A1990 | 64d |
| A50710 |  | Pipe Laying | 8d | 2026-06-28 | 2026-07-06 | A50700 | 64d |
| A50720 |  | Install Manhole | 4d | 2026-06-28 | 2026-07-01 | A50700 | 70d |
| A50730 |  | Testing & Inspection | 2d | 2026-07-07 | 2026-07-08 | A50710 | 64d |
| A50740 |  | Backfilling & Compaction | 4d | 2026-07-13 | 2026-07-16 | A50730, A50720, A50690 | 61d |
|  | MH-3.3 / MH-3.4 | **MH-3.3 / MH-3.4** |  | 2026-06-28 | 2026-08-13 |  |  |
| A50750 |  | Excavation | 4d | 2026-06-28 | 2026-07-01 | A50700, A1990 | 64d |
| A50760 |  | Pipe Laying | 8d | 2026-07-02 | 2026-07-11 | A50750 | 64d |
| A50770 |  | Install Manhole | 4d | 2026-07-02 | 2026-07-06 | A50750 | 70d |
| A50780 |  | Testing & Inspection | 2d | 2026-07-12 | 2026-07-13 | A50760 | 64d |
| A50790 |  | Backfilling & Compaction | 4d | 2026-08-10 | 2026-08-13 | A50780, A50770, A50740, A50540 | 41d |
|  | MH-3.4 / MH-3.5 | **MH-3.4 / MH-3.5** |  | 2026-07-02 | 2026-08-18 |  |  |
| A50800 |  | Excavation | 4d | 2026-07-02 | 2026-07-06 | A50750, A1990 | 64d |
| A50810 |  | Pipe Laying | 8d | 2026-07-07 | 2026-07-15 | A50800 | 64d |
| A50820 |  | Install Manhole | 4d | 2026-07-07 | 2026-07-11 | A50800 | 70d |
| A50830 |  | Testing & Inspection | 2d | 2026-07-16 | 2026-07-18 | A50810 | 64d |
| A50840 |  | Backfilling & Compaction | 4d | 2026-08-15 | 2026-08-18 | A50830, A50820, A50790 | 41d |
|  | MH-3.5 / MH-3.6 | **MH-3.5 / MH-3.6** |  | 2026-07-07 | 2026-08-23 |  |  |
| A50850 |  | Excavation | 4d | 2026-07-07 | 2026-07-11 | A50800, A1990 | 64d |
| A50860 |  | Pipe Laying | 8d | 2026-07-12 | 2026-07-20 | A50850 | 64d |
| A50870 |  | Install Manhole | 4d | 2026-07-12 | 2026-07-15 | A50850 | 70d |
| A50880 |  | Testing & Inspection | 2d | 2026-07-21 | 2026-07-22 | A50860 | 64d |
| A50890 |  | Backfilling & Compaction | 4d | 2026-08-19 | 2026-08-23 | A50880, A50870, A50840 | 41d |
|  | MH-3.6 / MH-3.7 | **MH-3.6 / MH-3.7** |  | 2026-07-12 | 2026-08-27 |  |  |
| A50900 |  | Excavation | 4d | 2026-07-12 | 2026-07-15 | A50850, A1990 | 64d |
| A50910 |  | Pipe Laying | 8d | 2026-07-16 | 2026-07-25 | A50900 | 64d |
| A50920 |  | Install Manhole | 4d | 2026-07-16 | 2026-07-20 | A50900 | 70d |
| A50930 |  | Testing & Inspection | 2d | 2026-07-26 | 2026-07-27 | A50910 | 64d |
| A50940 |  | Backfilling & Compaction | 4d | 2026-08-24 | 2026-08-27 | A50930, A50920, A50890 | 41d |
|  | LR 18 | **LR 18** |  | 2026-03-09 | 2026-04-26 |  |  |
|  | MH-3.48 / MH-3.49 | **MH-3.48 / MH-3.49** |  | 2026-03-09 | 2026-03-29 |  |  |
| A50950 |  | Excavation | 4d | 2026-03-09 | 2026-03-12 | A78770, A1990 | 159d |
| A50960 |  | Pipe Laying | 8d | 2026-03-14 | 2026-03-22 | A50950 | 159d |
| A50970 |  | Install Manhole | 4d | 2026-03-14 | 2026-03-17 | A50950 | 165d |
| A50980 |  | Testing & Inspection | 2d | 2026-03-23 | 2026-03-24 | A50960 | 159d |
| A50990 |  | Backfilling & Compaction | 4d | 2026-03-25 | 2026-03-29 | A50980, A50970 | 159d |
|  | MH-3.49 / MH-3.50 | **MH-3.49 / MH-3.50** |  | 2026-03-14 | 2026-04-02 |  |  |
| A51000 |  | Excavation | 4d | 2026-03-14 | 2026-03-17 | A50950, A1990 | 159d |
| A51010 |  | Pipe Laying | 4d | 2026-03-18 | 2026-03-22 | A51000 | 163d |
| A51020 |  | Install Manhole | 4d | 2026-03-18 | 2026-03-22 | A51000 | 165d |

| ID | WBS | Task | Duration | Start | Finish | Predecessors | Total float |
| --- | --- | --- | --- | --- | --- | --- | --- |
| A51030 |  | Testing & Inspection | 2d | 2026-03-23 | 2026-03-24 | A51010 | 163d |
| A51040 |  | Backfilling & Compaction | 4d | 2026-03-30 | 2026-04-02 | A51030, A51020, A50990 | 159d |
|  | MH-3.49.0 / MH-3.49.1 | **MH-3.49.0 / MH-3.49.1** |  | 2026-03-18 | 2026-04-14 |  |  |
| A51050 |  | Excavation | 4d | 2026-03-18 | 2026-03-22 | A51000, A1990 | 159d |
| A51060 |  | Pipe Laying | 8d | 2026-03-23 | 2026-03-31 | A51050 | 159d |
| A51070 |  | Install Manhole | 4d | 2026-03-23 | 2026-03-26 | A51050 | 165d |
| A51080 |  | Testing & Inspection | 2d | 2026-04-01 | 2026-04-02 | A51060 | 159d |
| A51090 |  | Backfilling & Compaction | 10d | 2026-04-04 | 2026-04-14 | A51080, A51070, A51040 | 159d |
|  | MH-3.50 / MH-3.51 | **MH-3.50 / MH-3.51** |  | 2026-03-23 | 2026-04-26 |  |  |
| A51100 |  | Excavation | 4d | 2026-03-23 | 2026-03-26 | A51050, A1990 | 169d |
| A51110 |  | Pipe Laying | 4d | 2026-03-28 | 2026-03-31 | A51100 | 169d |
| A51120 |  | Install Manhole | 4d | 2026-03-28 | 2026-03-31 | A51100 | 171d |
| A51130 |  | Testing & Inspection | 2d | 2026-04-01 | 2026-04-02 | A51110 | 169d |
| A51140 |  | Backfilling & Compaction | 10d | 2026-04-15 | 2026-04-26 | A51130, A51120, A51090, A78870 | 159d |
|  | LR 19 | **LR 19** |  | 2026-03-04 | 2026-04-12 |  |  |
|  | MH-3.45 / MH-3.46 | **MH-3.45 / MH-3.46** |  | 2026-03-04 | 2026-03-26 |  |  |
| A51150 |  | Excavation | 4d | 2026-03-04 | 2026-03-08 | A78920, A1990 | 171d |
| A51160 |  | Pipe Laying | 4d | 2026-03-09 | 2026-03-12 | A51150 | 171d |
| A51170 |  | Install Manhole | 4d | 2026-03-09 | 2026-03-12 | A51150 | 173d |
| A51180 |  | Testing & Inspection | 2d | 2026-03-14 | 2026-03-15 | A51160 | 171d |
| A51190 |  | Backfilling & Compaction | 10d | 2026-03-16 | 2026-03-26 | A51180, A51170 | 171d |
|  | MH-3.46 / MH-3.47 | **MH-3.46 / MH-3.47** |  | 2026-03-09 | 2026-04-07 |  |  |
| A51200 |  | Excavation | 4d | 2026-03-09 | 2026-03-12 | A51150, A1990 | 173d |
| A51210 |  | Pipe Laying | 8d | 2026-03-14 | 2026-03-22 | A51200 | 173d |
| A51220 |  | Install Manhole | 4d | 2026-03-14 | 2026-03-17 | A51200 | 179d |
| A51230 |  | Testing & Inspection | 2d | 2026-03-23 | 2026-03-24 | A51210 | 173d |
| A51240 |  | Backfilling & Compaction | 10d | 2026-03-28 | 2026-04-07 | A51230, A51220, A51190 | 171d |
|  | MH-3.47 / MH-3.48 | **MH-3.47 / MH-3.48** |  | 2026-03-14 | 2026-04-12 |  |  |
| A51250 |  | Excavation | 4d | 2026-03-14 | 2026-03-17 | A51200, A1990 | 179d |
| A51260 |  | Pipe Laying | 8d | 2026-03-18 | 2026-03-26 | A51250 | 179d |
| A51270 |  | Install Manhole | 4d | 2026-03-18 | 2026-03-22 | A51250 | 185d |
| A51280 |  | Testing & Inspection | 2d | 2026-03-28 | 2026-03-29 | A51260 | 179d |
| A51290 |  | Backfilling & Compaction | 4d | 2026-04-08 | 2026-04-12 | A51280, A51270, A51240, A79070 | 171d |
|  | LR 20 | **LR 20** |  | 2026-03-04 | 2026-04-23 |  |  |
|  | MH-3.42.0 / MH-3.42.1 | **MH-3.42.0 / MH-3.42.1** |  | 2026-03-04 | 2026-03-26 |  |  |
| A51300 |  | Excavation | 4d | 2026-03-04 | 2026-03-08 | A79120, A1990 | 161d |
| A51310 |  | Pipe Laying | 4d | 2026-03-09 | 2026-03-12 | A51300 | 161d |
| A51320 |  | Install Manhole | 4d | 2026-03-09 | 2026-03-12 | A51300 | 163d |
| A51330 |  | Testing & Inspection | 2d | 2026-03-14 | 2026-03-15 | A51310 | 161d |
| A51340 |  | Backfilling & Compaction | 10d | 2026-03-16 | 2026-03-26 | A51330, A51320 | 161d |
|  | MH-3.42.1 / MH-3.42.2 | **MH-3.42.1 / MH-3.42.2** |  | 2026-03-09 | 2026-04-07 |  |  |
| A51350 |  | Excavation | 4d | 2026-03-09 | 2026-03-12 | A51300, A1990 | 163d |
| A51360 |  | Pipe Laying | 8d | 2026-03-14 | 2026-03-22 | A51350 | 163d |
| A51370 |  | Install Manhole | 4d | 2026-03-14 | 2026-03-17 | A51350 | 169d |
| A51380 |  | Testing & Inspection | 2d | 2026-03-23 | 2026-03-24 | A51360 | 163d |
| A51390 |  | Backfilling & Compaction | 10d | 2026-03-28 | 2026-04-07 | A51380, A51370, A51340 | 161d |
|  | MH-3.42.2 / MH-3.42.3 | **MH-3.42.2 / MH-3.42.3** |  | 2026-03-14 | 2026-04-12 |  |  |
| A51400 |  | Excavation | 4d | 2026-03-14 | 2026-03-17 | A51350, A1990 | 169d |
| A51410 |  | Pipe Laying | 8d | 2026-03-18 | 2026-03-26 | A51400 | 169d |
| A51420 |  | Install Manhole | 4d | 2026-03-18 | 2026-03-22 | A51400 | 175d |
| A51430 |  | Testing & Inspection | 2d | 2026-03-28 | 2026-03-29 | A51410 | 169d |
| A51440 |  | Backfilling & Compaction | 4d | 2026-04-08 | 2026-04-12 | A51430, A51420, A51390 | 161d |
|  | MH-3.42.3 / MH-3.42.4 | **MH-3.42.3 / MH-3.42.4** |  | 2026-03-18 | 2026-04-23 |  |  |
| A51450 |  | Excavation | 4d | 2026-03-18 | 2026-03-22 | A51400, A1990 | 169d |
| A51460 |  | Pipe Laying | 8d | 2026-03-23 | 2026-03-31 | A51450 | 169d |
| A51470 |  | Install Manhole | 4d | 2026-03-23 | 2026-03-26 | A51450 | 175d |
| A51480 |  | Testing & Inspection | 2d | 2026-04-01 | 2026-04-02 | A51460 | 169d |
| A51490 |  | Backfilling & Compaction | 10d | 2026-04-13 | 2026-04-23 | A51480, A51470, A51440, A79320 | 161d |
|  | LR 21 | **LR 21** |  | 2026-03-04 | 2026-04-23 |  |  |
|  | MH-3.33 / MH-3.34 | **MH-3.33 / MH-3.34** |  | 2026-03-04 | 2026-03-26 |  |  |
| A51500 |  | Excavation | 4d | 2026-03-04 | 2026-03-08 | A79370, A1990 | 161d |
| A51510 |  | Pipe Laying | 4d | 2026-03-09 | 2026-03-12 | A51500, A10960 SS+24d | 161d |
| A51520 |  | Install Manhole | 4d | 2026-03-09 | 2026-03-12 | A51500 | 163d |
| A51530 |  | Testing & Inspection | 2d | 2026-03-14 | 2026-03-15 | A51510 | 161d |
| A51540 |  | Backfilling & Compaction | 10d | 2026-03-16 | 2026-03-26 | A51530, A51520 | 161d |
|  | MH-3.33.0 / MH-3.33.1 | **MH-3.33.0 / MH-3.33.1** |  | 2026-03-09 | 2026-04-07 |  |  |
| A51550 |  | Excavation | 4d | 2026-03-09 | 2026-03-12 | A51500, A1990 | 163d |
| A51560 |  | Pipe Laying | 8d | 2026-03-14 | 2026-03-22 | A51550, A10960 SS+24d | 163d |
| A51570 |  | Install Manhole | 4d | 2026-03-14 | 2026-03-17 | A51550 | 169d |
| A51580 |  | Testing & Inspection | 2d | 2026-03-23 | 2026-03-24 | A51560 | 163d |

| ID | WBS | Task | Duration | Start | Finish | Predecessors | Total float |
| --- | --- | --- | --- | --- | --- | --- | --- |
| A51590 |  | Backfilling & Compaction | 10d | 2026-03-28 | 2026-04-07 | A51580, A51570, A51540 | 161d |
|  | MH-3.34 / MH-3.35 | **MH-3.34 / MH-3.35** |  | 2026-03-14 | 2026-04-12 |  |  |
| A51600 |  | Excavation | 4d | 2026-03-14 | 2026-03-17 | A51550, A1990 | 169d |
| A51610 |  | Pipe Laying | 8d | 2026-03-18 | 2026-03-26 | A51600, A10960 SS+24d | 169d |
| A51620 |  | Install Manhole | 4d | 2026-03-18 | 2026-03-22 | A51600 | 175d |
| A51630 |  | Testing & Inspection | 2d | 2026-03-28 | 2026-03-29 | A51610 | 169d |
| A51640 |  | Backfilling & Compaction | 4d | 2026-04-08 | 2026-04-12 | A51630, A51620, A51590 | 161d |
|  | MH-3.35 / MH-3.36 | **MH-3.35 / MH-3.36** |  | 2026-03-18 | 2026-04-23 |  |  |
| A51650 |  | Excavation | 4d | 2026-03-18 | 2026-03-22 | A51600, A1990 | 169d |
| A51660 |  | Pipe Laying | 8d | 2026-03-23 | 2026-03-31 | A51650 | 169d |
| A51670 |  | Install Manhole | 4d | 2026-03-23 | 2026-03-26 | A51650 | 175d |
| A51680 |  | Testing & Inspection | 2d | 2026-04-01 | 2026-04-02 | A51660 | 169d |
| A51690 |  | Backfilling & Compaction | 10d | 2026-04-13 | 2026-04-23 | A51680, A51670, A51640, A79570 | 161d |
|  | LR 22 | **LR 22** |  | 2026-03-09 | 2026-05-19 |  |  |
|  | MH-3.31.0 / MH-3.31.1 | **MH-3.31.0 / MH-3.31.1** |  | 2026-03-09 | 2026-03-29 |  |  |
| A51700 |  | Excavation | 4d | 2026-03-09 | 2026-03-12 | A77120, A1990 | 125d |
| A51710 |  | Pipe Laying | 8d | 2026-03-14 | 2026-03-22 | A51700 | 125d |
| A51720 |  | Install Manhole | 4d | 2026-03-14 | 2026-03-17 | A51700 | 131d |
| A51730 |  | Testing & Inspection | 2d | 2026-03-23 | 2026-03-24 | A51710 | 125d |
| A51740 |  | Backfilling & Compaction | 4d | 2026-03-25 | 2026-03-29 | A51730, A51720 | 125d |
|  | MH-3.31.1 / MH-3.31.2 | **MH-3.31.1 / MH-3.31.2** |  | 2026-03-14 | 2026-04-02 |  |  |
| A51750 |  | Excavation | 4d | 2026-03-14 | 2026-03-17 | A51700, A1990 | 125d |
| A51760 |  | Pipe Laying | 4d | 2026-03-18 | 2026-03-22 | A51750 | 129d |
| A51770 |  | Install Manhole | 4d | 2026-03-18 | 2026-03-22 | A51750 | 131d |
| A51780 |  | Testing & Inspection | 2d | 2026-03-23 | 2026-03-24 | A51760 | 129d |
| A51790 |  | Backfilling & Compaction | 4d | 2026-03-30 | 2026-04-02 | A51780, A51770, A51740 | 125d |
|  | MH-3.31.1.0 / MH-3.31.1.1 | **MH-3.31.1.0 / MH-3.31.1.1** |  | 2026-03-18 | 2026-04-14 |  |  |
| A51800 |  | Excavation | 4d | 2026-03-18 | 2026-03-22 | A51750, A1990 | 125d |
| A51810 |  | Pipe Laying | 8d | 2026-03-23 | 2026-03-31 | A51800 | 125d |
| A51820 |  | Install Manhole | 4d | 2026-03-23 | 2026-03-26 | A51800 | 131d |
| A51830 |  | Testing & Inspection | 2d | 2026-04-01 | 2026-04-02 | A51810 | 125d |
| A51840 |  | Backfilling & Compaction | 10d | 2026-04-04 | 2026-04-14 | A51830, A51820, A51790 | 125d |
|  | MH-3.31.2 / MH-3.31.3 | **MH-3.31.2 / MH-3.31.3** |  | 2026-03-23 | 2026-04-26 |  |  |
| A51850 |  | Excavation | 4d | 2026-03-23 | 2026-03-26 | A51800, A1990 | 135d |
| A51860 |  | Pipe Laying | 4d | 2026-03-28 | 2026-03-31 | A51850 | 135d |
| A51870 |  | Install Manhole | 4d | 2026-03-28 | 2026-03-31 | A51850 | 137d |
| A51880 |  | Testing & Inspection | 2d | 2026-04-01 | 2026-04-02 | A51860 | 135d |
| A51890 |  | Backfilling & Compaction | 10d | 2026-04-15 | 2026-04-26 | A51880, A51870, A51840 | 125d |
|  | MH-3.31.2.0 / MH-3.31.2.1 | **MH-3.31.2.0 / MH-3.31.2.1** |  | 2026-03-28 | 2026-05-07 |  |  |
| A51900 |  | Excavation | 4d | 2026-03-28 | 2026-03-31 | A51850, A1990 | 137d |
| A51910 |  | Pipe Laying | 8d | 2026-04-01 | 2026-04-09 | A51900 | 137d |
| A51920 |  | Install Manhole | 4d | 2026-04-01 | 2026-04-05 | A51900 | 143d |
| A51930 |  | Testing & Inspection | 2d | 2026-04-11 | 2026-04-12 | A51910 | 137d |
| A51940 |  | Backfilling & Compaction | 10d | 2026-04-27 | 2026-05-07 | A51930, A51920, A51890 | 125d |
|  | MH-3.31.3 / MH-3.31.4 | **MH-3.31.3 / MH-3.31.4** |  | 2026-04-01 | 2026-05-19 |  |  |
| A51950 |  | Excavation | 4d | 2026-04-01 | 2026-04-05 | A51900, A1990 | 143d |
| A51960 |  | Pipe Laying | 8d | 2026-04-06 | 2026-04-14 | A51950 | 143d |
| A51970 |  | Install Manhole | 4d | 2026-04-06 | 2026-04-09 | A51950 | 149d |
| A51980 |  | Testing & Inspection | 2d | 2026-04-15 | 2026-04-16 | A51960 | 143d |
| A51990 |  | Backfilling & Compaction | 10d | 2026-05-09 | 2026-05-19 | A51980, A51970, A51940, A77220 | 125d |
|  | LR 23 | **LR 23** |  | 2026-03-09 | 2026-05-19 |  |  |
|  | MH-3.28.0 / MH-3.28.1 | **MH-3.28.0 / MH-3.28.1** |  | 2026-03-09 | 2026-03-29 |  |  |
| A52000 |  | Excavation | 4d | 2026-03-09 | 2026-03-12 | A77020, A1990 | 139d |
| A52010 |  | Pipe Laying | 8d | 2026-03-14 | 2026-03-22 | A52000 | 139d |
| A52020 |  | Install Manhole | 4d | 2026-03-14 | 2026-03-17 | A52000 | 145d |
| A52030 |  | Testing & Inspection | 2d | 2026-03-23 | 2026-03-24 | A52010 | 139d |
| A52040 |  | Backfilling & Compaction | 4d | 2026-03-25 | 2026-03-29 | A52030, A52020 | 139d |
|  | MH-3.28.1 / MH-3.28.2 | **MH-3.28.1 / MH-3.28.2** |  | 2026-03-14 | 2026-04-02 |  |  |
| A52050 |  | Excavation | 4d | 2026-03-14 | 2026-03-17 | A52000, A1990 | 139d |
| A52060 |  | Pipe Laying | 4d | 2026-03-18 | 2026-03-22 | A52050 | 143d |
| A52070 |  | Install Manhole | 4d | 2026-03-18 | 2026-03-22 | A52050 | 145d |
| A52080 |  | Testing & Inspection | 2d | 2026-03-23 | 2026-03-24 | A52060 | 143d |
| A52090 |  | Backfilling & Compaction | 4d | 2026-03-30 | 2026-04-02 | A52080, A52070, A52040 | 139d |
|  | MH-3.28.1.0 / MH-3.28.1.1 | **MH-3.28.1.0 / MH-3.28.1.1** |  | 2026-03-18 | 2026-04-14 |  |  |
| A52100 |  | Excavation | 4d | 2026-03-18 | 2026-03-22 | A52050, A1990 | 139d |
| A52110 |  | Pipe Laying | 8d | 2026-03-23 | 2026-03-31 | A52100 | 139d |
| A52120 |  | Install Manhole | 4d | 2026-03-23 | 2026-03-26 | A52100 | 145d |
| A52130 |  | Testing & Inspection | 2d | 2026-04-01 | 2026-04-02 | A52110 | 139d |
| A52140 |  | Backfilling & Compaction | 10d | 2026-04-04 | 2026-04-14 | A52130, A52120, A52090 | 139d |
|  | MH-3.28.2 / MH-3.28.3 | **MH-3.28.2 / MH-3.28.3** |  | 2026-03-23 | 2026-04-26 |  |  |

| ID | WBS | Task | Duration | Start | Finish | Predecessors | Total float |
| --- | --- | --- | --- | --- | --- | --- | --- |
| A52150 |  | Excavation | 4d | 2026-03-23 | 2026-03-26 | A52100, A1990 | 149d |
| A52160 |  | Pipe Laying | 4d | 2026-03-28 | 2026-03-31 | A52150 | 149d |
| A52170 |  | Install Manhole | 4d | 2026-03-28 | 2026-03-31 | A52150 | 151d |
| A52180 |  | Testing & Inspection | 2d | 2026-04-01 | 2026-04-02 | A52160 | 149d |
| A52190 |  | Backfilling & Compaction | 10d | 2026-04-15 | 2026-04-26 | A52180, A52170, A52140 | 139d |
|  | MH-3.28.2.0 / MH-3.28.2.1 | **MH-3.28.2.0 / MH-3.28.2.1** |  | 2026-03-28 | 2026-05-07 |  |  |
| A52200 |  | Excavation | 4d | 2026-03-28 | 2026-03-31 | A52150, A1990 | 151d |
| A52210 |  | Pipe Laying | 8d | 2026-04-01 | 2026-04-09 | A52200 | 151d |
| A52220 |  | Install Manhole | 4d | 2026-04-01 | 2026-04-05 | A52200 | 157d |
| A52230 |  | Testing & Inspection | 2d | 2026-04-11 | 2026-04-12 | A52210 | 151d |
| A52240 |  | Backfilling & Compaction | 10d | 2026-04-27 | 2026-05-07 | A52230, A52220, A52190 | 139d |
|  | MH-3.28.3 / MH-3.28.4 | **MH-3.28.3 / MH-3.28.4** |  | 2026-04-01 | 2026-05-19 |  |  |
| A52250 |  | Excavation | 4d | 2026-04-01 | 2026-04-05 | A52200, A1990 | 157d |
| A52260 |  | Pipe Laying | 8d | 2026-04-06 | 2026-04-14 | A52250 | 157d |
| A52270 |  | Install Manhole | 4d | 2026-04-06 | 2026-04-09 | A52250 | 163d |
| A52280 |  | Testing & Inspection | 2d | 2026-04-15 | 2026-04-16 | A52260 | 157d |
| A52290 |  | Backfilling & Compaction | 10d | 2026-05-09 | 2026-05-19 | A52280, A52270, A52240, A77070 | 139d |
|  | LR 24 | **LR 24** |  | 2026-03-17 | 2026-06-27 |  |  |
|  | MH-3.13.7 / MH-3.13.8 | **MH-3.13.7 / MH-3.13.8** |  | 2026-03-17 | 2026-04-13 |  |  |
| A52300 |  | Excavation | 4d | 2026-03-17 | 2026-03-21 | A76770, A1990 | 106d |
| A52310 |  | Pipe Laying | 8d | 2026-03-22 | 2026-03-30 | A52300 | 106d |
| A52320 |  | Install Manhole | 4d | 2026-03-22 | 2026-03-25 | A52300 | 112d |
| A52330 |  | Testing & Inspection | 2d | 2026-03-31 | 2026-04-01 | A52310 | 106d |
| A52340 |  | Backfilling & Compaction | 10d | 2026-04-02 | 2026-04-13 | A52330, A52320 | 106d |
|  | MH-3.23 / MH-3.24 | **MH-3.23 / MH-3.24** |  | 2026-03-22 | 2026-04-18 |  |  |
| A52350 |  | Excavation | 4d | 2026-03-22 | 2026-03-25 | A52300, A1990 | 112d |
| A52360 |  | Pipe Laying | 4d | 2026-03-26 | 2026-03-30 | A52350 | 116d |
| A52370 |  | Install Manhole | 4d | 2026-03-26 | 2026-03-30 | A52350 | 118d |
| A52380 |  | Testing & Inspection | 2d | 2026-03-31 | 2026-04-01 | A52360 | 116d |
| A52390 |  | Backfilling & Compaction | 4d | 2026-04-14 | 2026-04-18 | A52380, A52370, A52340 | 106d |
|  | MH-3.23.0 / MH-3.23.1 | **MH-3.23.0 / MH-3.23.1** |  | 2026-04-14 | 2026-06-15 |  |  |
| A52600 |  | Excavation | 4d | 2026-04-14 | 2026-04-18 | A52550, A1990 | 136d |
| A52610 |  | Pipe Laying | 8d | 2026-04-19 | 2026-04-27 | A52600 | 136d |
| A52620 |  | Install Manhole | 4d | 2026-04-19 | 2026-04-22 | A52600 | 142d |
| A52630 |  | Testing & Inspection | 2d | 2026-04-28 | 2026-04-29 | A52610 | 136d |
| A52640 |  | Backfilling & Compaction | 10d | 2026-06-04 | 2026-06-15 | A52630, A52620, A52590 | 106d |
|  | MH-3.23.0 / MH-3.23.1A | **MH-3.23.0 / MH-3.23.1A** |  | 2026-04-09 | 2026-06-03 |  |  |
| A52550 |  | Excavation | 4d | 2026-04-09 | 2026-04-13 | A52500, A1990 | 130d |
| A52560 |  | Pipe Laying | 8d | 2026-04-14 | 2026-04-22 | A52550 | 130d |
| A52570 |  | Install Manhole | 4d | 2026-04-14 | 2026-04-18 | A52550 | 136d |
| A52580 |  | Testing & Inspection | 2d | 2026-04-23 | 2026-04-25 | A52560 | 130d |
| A52590 |  | Backfilling & Compaction | 10d | 2026-05-24 | 2026-06-03 | A52580, A52570, A52540 | 106d |
|  | MH-3.23.1 / MH-3.23.2 | **MH-3.23.1 / MH-3.23.2** |  | 2026-04-19 | 2026-06-27 |  |  |
| A52650 |  | Excavation | 4d | 2026-04-19 | 2026-04-22 | A52600, A1990 | 142d |
| A52660 |  | Pipe Laying | 8d | 2026-04-23 | 2026-05-02 | A52650 | 142d |
| A52670 |  | Install Manhole | 4d | 2026-04-23 | 2026-04-27 | A52650 | 148d |
| A52680 |  | Testing & Inspection | 2d | 2026-05-03 | 2026-05-04 | A52660 | 142d |
| A52690 |  | Backfilling & Compaction | 10d | 2026-06-16 | 2026-06-27 | A52680, A52670, A52640, A76970 | 106d |
|  | MH-3.24 / MH-3.25 | **MH-3.24 / MH-3.25** |  | 2026-03-26 | 2026-04-29 |  |  |
| A52400 |  | Excavation | 4d | 2026-03-26 | 2026-03-30 | A52350, A1990 | 112d |
| A52410 |  | Pipe Laying | 8d | 2026-03-31 | 2026-04-08 | A52400 | 112d |
| A52420 |  | Install Manhole | 4d | 2026-03-31 | 2026-04-04 | A52400 | 118d |
| A52430 |  | Testing & Inspection | 2d | 2026-04-09 | 2026-04-11 | A52410 | 112d |
| A52440 |  | Backfilling & Compaction | 10d | 2026-04-19 | 2026-04-29 | A52430, A52420, A52390 | 106d |
|  | MH-3.24.0 / MH-3.24.1 | **MH-3.24.0 / MH-3.24.1** |  | 2026-03-31 | 2026-05-11 |  |  |
| A52450 |  | Excavation | 4d | 2026-03-31 | 2026-04-04 | A52400, A1990 | 118d |
| A52460 |  | Pipe Laying | 8d | 2026-04-05 | 2026-04-13 | A52450 | 118d |
| A52470 |  | Install Manhole | 4d | 2026-04-05 | 2026-04-08 | A52450 | 124d |
| A52480 |  | Testing & Inspection | 2d | 2026-04-14 | 2026-04-15 | A52460 | 118d |
| A52490 |  | Backfilling & Compaction | 10d | 2026-04-30 | 2026-05-11 | A52480, A52470, A52440 | 106d |
|  | MH-3.25 / MH-3.26 | **MH-3.25 / MH-3.26** |  | 2026-04-05 | 2026-05-23 |  |  |
| A52500 |  | Excavation | 4d | 2026-04-05 | 2026-04-08 | A52450, A1990 | 124d |
| A52510 |  | Pipe Laying | 8d | 2026-04-09 | 2026-04-18 | A52500 | 124d |
| A52520 |  | Install Manhole | 4d | 2026-04-09 | 2026-04-13 | A52500 | 130d |
| A52530 |  | Testing & Inspection | 2d | 2026-04-19 | 2026-04-20 | A52510 | 124d |
| A52540 |  | Backfilling & Compaction | 10d | 2026-05-12 | 2026-05-23 | A52530, A52520, A52490 | 106d |
|  | LR 25 | **LR 25** |  | 2026-03-10 | 2026-06-08 |  |  |
|  | MH-3.26 / MH-3.27 | **MH-3.26 / MH-3.27** |  | 2026-03-10 | 2026-03-25 |  |  |
| A52700 |  | Excavation | 4d | 2026-03-10 | 2026-03-14 | A76520, A1990 | 0d |
| A52710 |  | Pipe Laying | 4d | 2026-03-15 | 2026-03-18 | A52700 | 4d |

| ID | WBS | Task | Duration | Start | Finish | Predecessors | Total float |
| --- | --- | --- | --- | --- | --- | --- | --- |
| A52720 |  | Install Manhole | 4d | 2026-03-15 | 2026-03-18 | A52700 | 6d |
| A52730 |  | Testing & Inspection | 2d | 2026-03-19 | 2026-03-21 | A52710 | 4d |
| A52740 |  | Backfilling & Compaction | 4d | 2026-03-22 | 2026-03-25 | A52730, A52720 | 4d |
|  | MH-3.27 / MH-3.28 | **MH-3.27 / MH-3.28** |  | 2026-03-15 | 2026-04-11 |  |  |
| A52750 |  | Excavation | 4d | 2026-03-15 | 2026-03-18 | A52700, A1990 | 0d |
| A52760 |  | Pipe Laying | 8d | 2026-03-19 | 2026-03-28 | A52750 | 0d |
| A52770 |  | Install Manhole | 4d | 2026-03-19 | 2026-03-23 | A52750 | 6d |
| A52780 |  | Testing & Inspection | 2d | 2026-03-29 | 2026-03-30 | A52760 | 0d |
| A52790 |  | Backfilling & Compaction | 10d | 2026-03-31 | 2026-04-11 | A52780, A52770, A52740 | 0d |
|  | MH-3.28 / MH-3.29 | **MH-3.28 / MH-3.29** |  | 2026-03-19 | 2026-04-22 |  |  |
| A52800 |  | Excavation | 4d | 2026-03-19 | 2026-03-23 | A52750, A1990 | 6d |
| A52810 |  | Pipe Laying | 8d | 2026-03-24 | 2026-04-01 | A52800 | 6d |
| A52820 |  | Install Manhole | 4d | 2026-03-24 | 2026-03-28 | A52800 | 12d |
| A52830 |  | Testing & Inspection | 2d | 2026-04-02 | 2026-04-04 | A52810 | 6d |
| A52840 |  | Backfilling & Compaction | 10d | 2026-04-12 | 2026-04-22 | A52830, A52820, A52790 | 0d |
|  | MH-3.29 / MH-3.30 | **MH-3.29 / MH-3.30** |  | 2026-03-24 | 2026-05-04 |  |  |
| A52850 |  | Excavation | 4d | 2026-03-24 | 2026-03-28 | A52800, A1990 | 12d |
| A52860 |  | Pipe Laying | 8d | 2026-03-29 | 2026-04-06 | A52850 | 12d |
| A52870 |  | Install Manhole | 4d | 2026-03-29 | 2026-04-01 | A52850 | 18d |
| A52880 |  | Testing & Inspection | 2d | 2026-04-07 | 2026-04-08 | A52860 | 12d |
| A52890 |  | Backfilling & Compaction | 10d | 2026-04-23 | 2026-05-04 | A52880, A52870, A52840 | 0d |
|  | MH-3.30 / MH-3.31 | **MH-3.30 / MH-3.31** |  | 2026-03-29 | 2026-05-16 |  |  |
| A52900 |  | Excavation | 4d | 2026-03-29 | 2026-04-01 | A52850, A1990 | 18d |
| A52910 |  | Pipe Laying | 8d | 2026-04-02 | 2026-04-11 | A52900 | 18d |
| A52920 |  | Install Manhole | 4d | 2026-04-02 | 2026-04-06 | A52900 | 24d |
| A52930 |  | Testing & Inspection | 2d | 2026-04-12 | 2026-04-13 | A52910 | 18d |
| A52940 |  | Backfilling & Compaction | 10d | 2026-05-05 | 2026-05-16 | A52930, A52920, A52890 | 0d |
|  | MH-3.31 / MH-3.32 | **MH-3.31 / MH-3.32** |  | 2026-04-02 | 2026-05-27 |  |  |
| A52950 |  | Excavation | 4d | 2026-04-02 | 2026-04-06 | A52900, A1990 | 24d |
| A52960 |  | Pipe Laying | 8d | 2026-04-07 | 2026-04-15 | A52950 | 24d |
| A52970 |  | Install Manhole | 4d | 2026-04-07 | 2026-04-11 | A52950 | 30d |
| A52980 |  | Testing & Inspection | 2d | 2026-04-16 | 2026-04-18 | A52960 | 24d |
| A52990 |  | Backfilling & Compaction | 10d | 2026-05-17 | 2026-05-27 | A52980, A52970, A52940 | 0d |
|  | MH-3.32 / MH-3.33 | **MH-3.32 / MH-3.33** |  | 2026-04-07 | 2026-06-08 |  |  |
| A53000 |  | Excavation | 4d | 2026-04-07 | 2026-04-11 | A52950, A1990 | 30d |
| A53010 |  | Pipe Laying | 8d | 2026-04-12 | 2026-04-20 | A53000 | 30d |
| A53020 |  | Install Manhole | 4d | 2026-04-12 | 2026-04-15 | A53000 | 36d |
| A53030 |  | Testing & Inspection | 2d | 2026-04-21 | 2026-04-22 | A53010 | 30d |
| A53040 |  | Backfilling & Compaction | 10d | 2026-05-28 | 2026-06-08 | A53030, A53020, A52990, A76720 | 0d |
|  | LR 26 | **LR 26** |  | 2026-06-09 | 2027-01-19 |  |  |
|  | MH-3.12 / MH-3.13 | **MH-3.12 / MH-3.13** |  | 2026-06-09 | 2026-06-29 |  |  |
| A53050 |  | Excavation | 4d | 2026-06-09 | 2026-06-13 | A75870, A1990, A53040 | 0d |
| A53060 |  | Pipe Laying | 8d | 2026-06-14 | 2026-06-22 | A53050 | 0d |
| A53070 |  | Install Manhole | 4d | 2026-06-14 | 2026-06-17 | A53050 | 6d |
| A53080 |  | Testing & Inspection | 2d | 2026-06-23 | 2026-06-24 | A53060 | 0d |
| A53090 |  | Backfilling & Compaction | 4d | 2026-06-25 | 2026-06-29 | A53080, A53070 | 0d |
|  | MH-3.13 / MH-3.14 | **MH-3.13 / MH-3.14** |  | 2026-06-14 | 2026-07-04 |  |  |
| A53100 |  | Excavation | 4d | 2026-06-14 | 2026-06-17 | A53050, A1990 | 0d |
| A53110 |  | Pipe Laying | 8d | 2026-06-18 | 2026-06-27 | A53100 | 0d |
| A53120 |  | Install Manhole | 4d | 2026-06-18 | 2026-06-22 | A53100 | 6d |
| A53130 |  | Testing & Inspection | 2d | 2026-06-28 | 2026-06-29 | A53110 | 0d |
| A53140 |  | Backfilling & Compaction | 4d | 2026-06-30 | 2026-07-04 | A53130, A53120, A53090 | 0d |
|  | MH-3.13.0 / MH-3.13.1 | **MH-3.13.0 / MH-3.13.1** |  | 2026-06-18 | 2026-07-08 |  |  |
| A53150 |  | Excavation | 4d | 2026-06-18 | 2026-06-22 | A53100, A1990 | 0d |
| A53160 |  | Pipe Laying | 8d | 2026-06-23 | 2026-07-01 | A53150 | 0d |
| A53170 |  | Install Manhole | 4d | 2026-06-23 | 2026-06-27 | A53150 | 6d |
| A53180 |  | Testing & Inspection | 2d | 2026-07-02 | 2026-07-04 | A53160 | 0d |
| A53190 |  | Backfilling & Compaction | 4d | 2026-07-05 | 2026-07-08 | A53180, A53170, A53140 | 0d |
|  | MH-3.13.1 / MH-3.13.1.1 | **MH-3.13.1 / MH-3.13.1.1** |  | 2026-07-02 | 2026-07-22 |  |  |
| A53300 |  | Excavation | 4d | 2026-07-02 | 2026-07-06 | A53250, A1990 | 0d |
| A53310 |  | Pipe Laying | 8d | 2026-07-07 | 2026-07-15 | A53300 | 0d |
| A53320 |  | Install Manhole | 4d | 2026-07-07 | 2026-07-11 | A53300 | 6d |
| A53330 |  | Testing & Inspection | 2d | 2026-07-16 | 2026-07-18 | A53310 | 0d |
| A53340 |  | Backfilling & Compaction | 4d | 2026-07-19 | 2026-07-22 | A53330, A53320, A53290 | 0d |
|  | MH-3.13.1 / MH-3.13.1A | **MH-3.13.1 / MH-3.13.1A** |  | 2026-06-23 | 2026-07-13 |  |  |
| A53200 |  | Excavation | 4d | 2026-06-23 | 2026-06-27 | A53150, A1990 | 0d |
| A53210 |  | Pipe Laying | 8d | 2026-06-28 | 2026-07-06 | A53200 | 0d |
| A53220 |  | Install Manhole | 4d | 2026-06-28 | 2026-07-01 | A53200 | 6d |
| A53230 |  | Testing & Inspection | 2d | 2026-07-07 | 2026-07-08 | A53210 | 0d |
| A53240 |  | Backfilling & Compaction | 4d | 2026-07-09 | 2026-07-13 | A53230, A53220, A53190 | 0d |

| ID | WBS | Task | Duration | Start | Finish | Predecessors | Total float |
| --- | --- | --- | --- | --- | --- | --- | --- |
|  | MH-3.13.1 / MH-3.13.2 | **MH-3.13.1 / MH-3.13.2** |  | 2026-06-28 | 2026-07-18 |  |  |
| A53250 |  | Excavation | 4d | 2026-06-28 | 2026-07-01 | A53200, A1990 | 0d |
| A53260 |  | Pipe Laying | 8d | 2026-07-02 | 2026-07-11 | A53250 | 0d |
| A53270 |  | Install Manhole | 4d | 2026-07-02 | 2026-07-06 | A53250 | 6d |
| A53280 |  | Testing & Inspection | 2d | 2026-07-12 | 2026-07-13 | A53260 | 0d |
| A53290 |  | Backfilling & Compaction | 4d | 2026-07-14 | 2026-07-18 | A53280, A53270, A53240 | 0d |
|  | MH-3.13.1.0 / MH-3.13.1.1 | **MH-3.13.1.0 / MH-3.13.1.1** |  | 2026-07-07 | 2026-07-27 |  |  |
| A53350 |  | Excavation | 4d | 2026-07-07 | 2026-07-11 | A53300, A1990 | 0d |
| A53360 |  | Pipe Laying | 8d | 2026-07-12 | 2026-07-20 | A53350 | 0d |
| A53370 |  | Install Manhole | 4d | 2026-07-12 | 2026-07-15 | A53350 | 6d |
| A53380 |  | Testing & Inspection | 2d | 2026-07-21 | 2026-07-22 | A53360 | 0d |
| A53390 |  | Backfilling & Compaction | 4d | 2026-07-23 | 2026-07-27 | A53380, A53370, A53340 | 0d |
|  | MH-3.13.2 / MH-3.13.3 | **MH-3.13.2 / MH-3.13.3** |  | 2026-07-12 | 2026-08-01 |  |  |
| A53400 |  | Excavation | 4d | 2026-07-12 | 2026-07-15 | A53350, A1990 | 0d |
| A53410 |  | Pipe Laying | 8d | 2026-07-16 | 2026-07-25 | A53400 | 0d |
| A53420 |  | Install Manhole | 4d | 2026-07-16 | 2026-07-20 | A53400 | 6d |
| A53430 |  | Testing & Inspection | 2d | 2026-07-26 | 2026-07-27 | A53410 | 0d |
| A53440 |  | Backfilling & Compaction | 4d | 2026-07-28 | 2026-08-01 | A53430, A53420, A53390 | 0d |
|  | MH-3.13.2.0 / MH-3.13.2.1 | **MH-3.13.2.0 / MH-3.13.2.1** |  | 2026-07-16 | 2026-08-05 |  |  |
| A53450 |  | Excavation | 4d | 2026-07-16 | 2026-07-20 | A53400, A1990 | 0d |
| A53460 |  | Pipe Laying | 8d | 2026-07-21 | 2026-07-29 | A53450 | 0d |
| A53470 |  | Install Manhole | 4d | 2026-07-21 | 2026-07-25 | A53450 | 6d |
| A53480 |  | Testing & Inspection | 2d | 2026-07-30 | 2026-08-01 | A53460 | 0d |
| A53490 |  | Backfilling & Compaction | 4d | 2026-08-02 | 2026-08-05 | A53480, A53470, A53440 | 0d |
|  | MH-3.13.3 / MH-3.13.4 | **MH-3.13.3 / MH-3.13.4** |  | 2026-07-21 | 2026-08-10 |  |  |
| A53500 |  | Excavation | 4d | 2026-07-21 | 2026-07-25 | A53450, A1990 | 0d |
| A53510 |  | Pipe Laying | 8d | 2026-07-26 | 2026-08-03 | A53500 | 0d |
| A53520 |  | Install Manhole | 4d | 2026-07-26 | 2026-07-29 | A53500 | 6d |
| A53530 |  | Testing & Inspection | 2d | 2026-08-04 | 2026-08-05 | A53510 | 0d |
| A53540 |  | Backfilling & Compaction | 4d | 2026-08-06 | 2026-08-10 | A53530, A53520, A53490 | 0d |
|  | MH-3.13.3.0 / MH-3.13.3.1 | **MH-3.13.3.0 / MH-3.13.3.1** |  | 2026-07-26 | 2026-08-15 |  |  |
| A53550 |  | Excavation | 4d | 2026-07-26 | 2026-07-29 | A53500, A1990 | 0d |
| A53560 |  | Pipe Laying | 8d | 2026-07-30 | 2026-08-08 | A53550 | 0d |
| A53570 |  | Install Manhole | 4d | 2026-07-30 | 2026-08-03 | A53550 | 6d |
| A53580 |  | Testing & Inspection | 2d | 2026-08-09 | 2026-08-10 | A53560 | 0d |
| A53590 |  | Backfilling & Compaction | 4d | 2026-08-11 | 2026-08-15 | A53580, A53570, A53540 | 0d |
|  | MH-3.13.4 / MH-3.13.5 | **MH-3.13.4 / MH-3.13.5** |  | 2026-07-30 | 2026-08-19 |  |  |
| A53600 |  | Excavation | 4d | 2026-07-30 | 2026-08-03 | A53550, A1990 | 0d |
| A53610 |  | Pipe Laying | 8d | 2026-08-04 | 2026-08-12 | A53600 | 0d |
| A53620 |  | Install Manhole | 4d | 2026-08-04 | 2026-08-08 | A53600 | 6d |
| A53630 |  | Testing & Inspection | 2d | 2026-08-13 | 2026-08-15 | A53610 | 0d |
| A53640 |  | Backfilling & Compaction | 4d | 2026-08-16 | 2026-08-19 | A53630, A53620, A53590 | 0d |
|  | MH-3.13.4.0 / MH-3.13.4.1 | **MH-3.13.4.0 / MH-3.13.4.1** |  | 2026-08-04 | 2026-08-24 |  |  |
| A53650 |  | Excavation | 4d | 2026-08-04 | 2026-08-08 | A53600, A1990 | 0d |
| A53660 |  | Pipe Laying | 8d | 2026-08-09 | 2026-08-17 | A53650 | 0d |
| A53670 |  | Install Manhole | 4d | 2026-08-09 | 2026-08-12 | A53650 | 6d |
| A53680 |  | Testing & Inspection | 2d | 2026-08-18 | 2026-08-19 | A53660 | 0d |
| A53690 |  | Backfilling & Compaction | 4d | 2026-08-20 | 2026-08-24 | A53680, A53670, A53640 | 0d |
|  | MH-3.13.5 / MH-3.13.6 | **MH-3.13.5 / MH-3.13.6** |  | 2026-08-09 | 2026-08-29 |  |  |
| A53700 |  | Excavation | 4d | 2026-08-09 | 2026-08-12 | A53650, A1990 | 0d |
| A53710 |  | Pipe Laying | 8d | 2026-08-13 | 2026-08-22 | A53700 | 0d |
| A53720 |  | Install Manhole | 4d | 2026-08-13 | 2026-08-17 | A53700 | 6d |
| A53730 |  | Testing & Inspection | 2d | 2026-08-23 | 2026-08-24 | A53710 | 0d |
| A53740 |  | Backfilling & Compaction | 4d | 2026-08-25 | 2026-08-29 | A53730, A53720, A53690 | 0d |
|  | MH-3.13.5.0 / MH-3.13.5.1 | **MH-3.13.5.0 / MH-3.13.5.1** |  | 2026-08-13 | 2026-09-02 |  |  |
| A53750 |  | Excavation | 4d | 2026-08-13 | 2026-08-17 | A53700, A1990 | 0d |
| A53760 |  | Pipe Laying | 4d | 2026-08-18 | 2026-08-22 | A53750 | 4d |
| A53770 |  | Install Manhole | 4d | 2026-08-18 | 2026-08-22 | A53750 | 6d |
| A53780 |  | Testing & Inspection | 2d | 2026-08-23 | 2026-08-24 | A53760 | 4d |
| A53790 |  | Backfilling & Compaction | 4d | 2026-08-30 | 2026-09-02 | A53780, A53770, A53740, A50090 | 0d |
|  | MH-3.13.6 / MH-3.13.7 | **MH-3.13.6 / MH-3.13.7** |  | 2026-08-18 | 2026-09-07 |  |  |
| A53800 |  | Excavation | 4d | 2026-08-18 | 2026-08-22 | A53750, A1990 | 0d |
| A53810 |  | Pipe Laying | 8d | 2026-08-23 | 2026-08-31 | A53800 | 0d |
| A53820 |  | Install Manhole | 4d | 2026-08-23 | 2026-08-26 | A53800 | 6d |
| A53830 |  | Testing & Inspection | 2d | 2026-09-01 | 2026-09-02 | A53810 | 0d |
| A53840 |  | Backfilling & Compaction | 4d | 2026-09-03 | 2026-09-07 | A53830, A53820, A53790 | 0d |
|  | MH-3.13.6.0 / MH-3.13.6.1 | **MH-3.13.6.0 / MH-3.13.6.1** |  | 2026-08-23 | 2026-09-12 |  |  |
| A53850 |  | Excavation | 4d | 2026-08-23 | 2026-08-26 | A53800, A1990 | 0d |
| A53860 |  | Pipe Laying | 8d | 2026-08-27 | 2026-09-05 | A53850 | 0d |
| A53870 |  | Install Manhole | 4d | 2026-08-27 | 2026-08-31 | A53850 | 6d |

| ID | WBS | Task | Duration | Start | Finish | Predecessors | Total float |
| --- | --- | --- | --- | --- | --- | --- | --- |
| A53880 |  | Testing & Inspection | 2d | 2026-09-06 | 2026-09-07 | A53860 | 0d |
| A53890 |  | Backfilling & Compaction | 4d | 2026-09-08 | 2026-09-12 | A53880, A53870, A53840 | 0d |
|  | MH-3.14 / MH-3.15 | **MH-3.14 / MH-3.15** |  | 2026-08-27 | 2026-09-16 |  |  |
| A53900 |  | Excavation | 4d | 2026-08-27 | 2026-08-31 | A53850, A1990 | 0d |
| A53910 |  | Pipe Laying | 8d | 2026-09-01 | 2026-09-09 | A53900 | 0d |
| A53920 |  | Install Manhole | 4d | 2026-09-01 | 2026-09-05 | A53900 | 6d |
| A53930 |  | Testing & Inspection | 2d | 2026-09-10 | 2026-09-12 | A53910 | 0d |
| A53940 |  | Backfilling & Compaction | 4d | 2026-09-13 | 2026-09-16 | A53930, A53920, A53890, A50590 | 0d |
|  | MH-3.14.0 / MH-3.14.1 | **MH-3.14.0 / MH-3.14.1** |  | 2026-09-01 | 2026-09-21 |  |  |
| A53950 |  | Excavation | 4d | 2026-09-01 | 2026-09-05 | A53900, A1990 | 0d |
| A53960 |  | Pipe Laying | 8d | 2026-09-06 | 2026-09-14 | A53950 | 0d |
| A53970 |  | Install Manhole | 4d | 2026-09-06 | 2026-09-09 | A53950 | 6d |
| A53980 |  | Testing & Inspection | 2d | 2026-09-15 | 2026-09-16 | A53960 | 0d |
| A53990 |  | Backfilling & Compaction | 4d | 2026-09-17 | 2026-09-21 | A53980, A53970, A53940 | 0d |
|  | MH-3.15 / MH-3.16 | **MH-3.15 / MH-3.16** |  | 2026-09-06 | 2026-09-26 |  |  |
| A54000 |  | Excavation | 4d | 2026-09-06 | 2026-09-09 | A53950, A1990 | 0d |
| A54010 |  | Pipe Laying | 8d | 2026-09-10 | 2026-09-19 | A54000 | 0d |
| A54020 |  | Install Manhole | 4d | 2026-09-10 | 2026-09-14 | A54000 | 6d |
| A54030 |  | Testing & Inspection | 2d | 2026-09-20 | 2026-09-21 | A54010 | 0d |
| A54040 |  | Backfilling & Compaction | 4d | 2026-09-22 | 2026-09-26 | A54030, A54020, A53990 | 0d |
|  | MH-3.15.0 / MH-3.15.1 | **MH-3.15.0 / MH-3.15.1** |  | 2026-09-10 | 2026-09-30 |  |  |
| A54050 |  | Excavation | 4d | 2026-09-10 | 2026-09-14 | A54000, A1990 | 0d |
| A54060 |  | Pipe Laying | 8d | 2026-09-15 | 2026-09-23 | A54050 | 0d |
| A54070 |  | Install Manhole | 4d | 2026-09-15 | 2026-09-19 | A54050 | 6d |
| A54080 |  | Testing & Inspection | 2d | 2026-09-24 | 2026-09-26 | A54060 | 0d |
| A54090 |  | Backfilling & Compaction | 4d | 2026-09-27 | 2026-09-30 | A54080, A54070, A54040 | 0d |
|  | MH-3.16.0 / MH-3.16.1 | **MH-3.16.0 / MH-3.16.1** |  | 2026-09-15 | 2026-10-05 |  |  |
| A54100 |  | Excavation | 4d | 2026-09-15 | 2026-09-19 | A54050, A1990 | 0d |
| A54110 |  | Pipe Laying | 8d | 2026-09-20 | 2026-09-28 | A54100 | 0d |
| A54120 |  | Install Manhole | 4d | 2026-09-20 | 2026-09-23 | A54100 | 6d |
| A54130 |  | Testing & Inspection | 2d | 2026-09-29 | 2026-09-30 | A54110 | 0d |
| A54140 |  | Backfilling & Compaction | 4d | 2026-10-01 | 2026-10-05 | A54130, A54120, A54090 | 0d |
|  | MH-3.16.0 / MH-3.16.1A | **MH-3.16.0 / MH-3.16.1A** |  | 2026-09-20 | 2026-10-10 |  |  |
| A54150 |  | Excavation | 4d | 2026-09-20 | 2026-09-23 | A54100, A1990 | 0d |
| A54160 |  | Pipe Laying | 8d | 2026-09-24 | 2026-10-03 | A54150 | 0d |
| A54170 |  | Install Manhole | 4d | 2026-09-24 | 2026-09-28 | A54150 | 6d |
| A54180 |  | Testing & Inspection | 2d | 2026-10-04 | 2026-10-05 | A54160 | 0d |
| A54190 |  | Backfilling & Compaction | 4d | 2026-10-06 | 2026-10-10 | A54180, A54170, A54140 | 0d |
|  | MH-3.16.1 / MH-3.16.2 | **MH-3.16.1 / MH-3.16.2** |  | 2026-09-24 | 2026-10-14 |  |  |
| A54200 |  | Excavation | 4d | 2026-09-24 | 2026-09-28 | A54150, A1990 | 0d |
| A54210 |  | Pipe Laying | 8d | 2026-09-29 | 2026-10-07 | A54200 | 0d |
| A54220 |  | Install Manhole | 4d | 2026-09-29 | 2026-10-03 | A54200 | 6d |
| A54230 |  | Testing & Inspection | 2d | 2026-10-08 | 2026-10-10 | A54210 | 0d |
| A54240 |  | Backfilling & Compaction | 4d | 2026-10-11 | 2026-10-14 | A54230, A54220, A54190 | 0d |
|  | MH-3.16.1.0 / MH-3.16.1.1 | **MH-3.16.1.0 / MH-3.16.1.1** |  | 2026-09-29 | 2026-10-19 |  |  |
| A54250 |  | Excavation | 4d | 2026-09-29 | 2026-10-03 | A54200, A1990 | 0d |
| A54260 |  | Pipe Laying | 8d | 2026-10-04 | 2026-10-12 | A54250 | 0d |
| A54270 |  | Install Manhole | 4d | 2026-10-04 | 2026-10-07 | A54250 | 6d |
| A54280 |  | Testing & Inspection | 2d | 2026-10-13 | 2026-10-14 | A54260 | 0d |
| A54290 |  | Backfilling & Compaction | 4d | 2026-10-15 | 2026-10-19 | A54280, A54270, A54240, A50940 | 0d |
|  | MH-3.16.10 / MH-3.16.11 | **MH-3.16.10 / MH-3.16.11** |  | 2026-10-04 | 2026-10-24 |  |  |
| A54300 |  | Excavation | 4d | 2026-10-04 | 2026-10-07 | A54250, A1990 | 0d |
| A54310 |  | Pipe Laying | 8d | 2026-10-08 | 2026-10-17 | A54300 | 0d |
| A54320 |  | Install Manhole | 4d | 2026-10-08 | 2026-10-12 | A54300 | 6d |
| A54330 |  | Testing & Inspection | 2d | 2026-10-18 | 2026-10-19 | A54310 | 0d |
| A54340 |  | Backfilling & Compaction | 4d | 2026-10-20 | 2026-10-24 | A54330, A54320, A54290 | 0d |
|  | MH-3.16.2 / MH-3.16.3 | **MH-3.16.2 / MH-3.16.3** |  | 2026-10-08 | 2026-10-28 |  |  |
| A54350 |  | Excavation | 4d | 2026-10-08 | 2026-10-12 | A54300, A1990 | 0d |
| A54360 |  | Pipe Laying | 8d | 2026-10-13 | 2026-10-21 | A54350 | 0d |
| A54370 |  | Install Manhole | 4d | 2026-10-13 | 2026-10-17 | A54350 | 6d |
| A54380 |  | Testing & Inspection | 2d | 2026-10-22 | 2026-10-24 | A54360 | 0d |
| A54390 |  | Backfilling & Compaction | 4d | 2026-10-25 | 2026-10-28 | A54380, A54370, A54340 | 0d |
|  | MH-3.16.2.0 / MH-3.16.2.1 | **MH-3.16.2.0 / MH-3.16.2.1** |  | 2026-10-13 | 2026-11-02 |  |  |
| A54400 |  | Excavation | 4d | 2026-10-13 | 2026-10-17 | A54350, A1990 | 1d |
| A54410 |  | Pipe Laying | 8d | 2026-10-18 | 2026-10-26 | A54400 | 12d |
| A54420 |  | Install Manhole | 4d | 2026-10-18 | 2026-10-21 | A54400 | 18d |
| A54430 |  | Testing & Inspection | 2d | 2026-10-27 | 2026-10-28 | A54410 | 12d |
| A54440 |  | Backfilling & Compaction | 4d | 2026-10-29 | 2026-11-02 | A54430, A54420, A54390 | 12d |
|  | MH-3.16.3 / MH-3.16.4 | **MH-3.16.3 / MH-3.16.4** |  | 2026-10-18 | 2026-11-07 |  |  |
| A54450 |  | Excavation | 4d | 2026-10-18 | 2026-10-21 | A54400, A1990 | 1d |

| ID | WBS | Task | Duration | Start | Finish | Predecessors | Total float |
| --- | --- | --- | --- | --- | --- | --- | --- |
| A54460 |  | Pipe Laying | 8d | 2026-10-22 | 2026-10-31 | A54450 | 12d |
| A54470 |  | Install Manhole | 4d | 2026-10-22 | 2026-10-26 | A54450 | 18d |
| A54480 |  | Testing & Inspection | 2d | 2026-11-01 | 2026-11-02 | A54460 | 12d |
| A54490 |  | Backfilling & Compaction | 4d | 2026-11-03 | 2026-11-07 | A54480, A54470, A54440 | 12d |
|  | MH-3.16.3.0 / MH-3.16.3.1 | **MH-3.16.3.0 / MH-3.16.3.1** |  | 2026-10-22 | 2026-11-11 |  |  |
| A54500 |  | Excavation | 4d | 2026-10-22 | 2026-10-26 | A54450, A1990 | 1d |
| A54510 |  | Pipe Laying | 8d | 2026-10-27 | 2026-11-04 | A54500 | 12d |
| A54520 |  | Install Manhole | 4d | 2026-10-27 | 2026-10-31 | A54500 | 18d |
| A54530 |  | Testing & Inspection | 2d | 2026-11-05 | 2026-11-07 | A54510 | 12d |
| A54540 |  | Backfilling & Compaction | 4d | 2026-11-08 | 2026-11-11 | A54530, A54520, A54490 | 12d |
|  | MH-3.16.4 / MH-3.16.5 | **MH-3.16.4 / MH-3.16.5** |  | 2026-10-27 | 2026-11-16 |  |  |
| A54550 |  | Excavation | 4d | 2026-10-27 | 2026-10-31 | A54500, A1990 | 1d |
| A54560 |  | Pipe Laying | 8d | 2026-11-01 | 2026-11-09 | A54550 | 12d |
| A54570 |  | Install Manhole | 4d | 2026-11-01 | 2026-11-04 | A54550 | 18d |
| A54580 |  | Testing & Inspection | 2d | 2026-11-10 | 2026-11-11 | A54560 | 12d |
| A54590 |  | Backfilling & Compaction | 4d | 2026-11-12 | 2026-11-16 | A54580, A54570, A54540 | 12d |
|  | MH-3.16.4.0 / MH-3.16.4.1 | **MH-3.16.4.0 / MH-3.16.4.1** |  | 2026-11-01 | 2026-11-21 |  |  |
| A54600 |  | Excavation | 4d | 2026-11-01 | 2026-11-04 | A54550, A1990 | 1d |
| A54610 |  | Pipe Laying | 8d | 2026-11-05 | 2026-11-14 | A54600 | 12d |
| A54620 |  | Install Manhole | 4d | 2026-11-05 | 2026-11-09 | A54600 | 18d |
| A54630 |  | Testing & Inspection | 2d | 2026-11-15 | 2026-11-16 | A54610 | 12d |
| A54640 |  | Backfilling & Compaction | 4d | 2026-11-17 | 2026-11-21 | A54630, A54620, A54590 | 12d |
|  | MH-3.16.5 / MH-3.16.6 | **MH-3.16.5 / MH-3.16.6** |  | 2026-11-05 | 2026-11-25 |  |  |
| A54650 |  | Excavation | 4d | 2026-11-05 | 2026-11-09 | A54600, A1990 | 1d |
| A54660 |  | Pipe Laying | 8d | 2026-11-10 | 2026-11-18 | A54650 | 12d |
| A54670 |  | Install Manhole | 4d | 2026-11-10 | 2026-11-14 | A54650 | 18d |
| A54680 |  | Testing & Inspection | 2d | 2026-11-19 | 2026-11-21 | A54660 | 12d |
| A54690 |  | Backfilling & Compaction | 4d | 2026-11-22 | 2026-11-25 | A54680, A54670, A54640 | 12d |
|  | MH-3.16.5.0 / MH-3.16.5.1 | **MH-3.16.5.0 / MH-3.16.5.1** |  | 2026-11-10 | 2026-11-30 |  |  |
| A54700 |  | Excavation | 4d | 2026-11-10 | 2026-11-14 | A54650, A1990 | 1d |
| A54710 |  | Pipe Laying | 8d | 2026-11-15 | 2026-11-23 | A54700 | 12d |
| A54720 |  | Install Manhole | 4d | 2026-11-15 | 2026-11-18 | A54700 | 18d |
| A54730 |  | Testing & Inspection | 2d | 2026-11-24 | 2026-11-25 | A54710 | 12d |
| A54740 |  | Backfilling & Compaction | 4d | 2026-11-26 | 2026-11-30 | A54730, A54720, A54690 | 12d |
|  | MH-3.16.6 / MH-3.16.7 | **MH-3.16.6 / MH-3.16.7** |  | 2026-11-15 | 2026-12-05 |  |  |
| A54750 |  | Excavation | 4d | 2026-11-15 | 2026-11-18 | A54700, A1990 | 1d |
| A54760 |  | Pipe Laying | 8d | 2026-11-19 | 2026-11-28 | A54750 | 12d |
| A54770 |  | Install Manhole | 4d | 2026-11-19 | 2026-11-23 | A54750 | 18d |
| A54780 |  | Testing & Inspection | 2d | 2026-11-29 | 2026-11-30 | A54760 | 12d |
| A54790 |  | Backfilling & Compaction | 4d | 2026-12-01 | 2026-12-05 | A54780, A54770, A54740 | 12d |
|  | MH-3.16.6.0 / MH-3.16.6.1 | **MH-3.16.6.0 / MH-3.16.6.1** |  | 2026-11-19 | 2026-12-09 |  |  |
| A54800 |  | Excavation | 4d | 2026-11-19 | 2026-11-23 | A54750, A1990 | 1d |
| A54810 |  | Pipe Laying | 8d | 2026-11-24 | 2026-12-02 | A54800 | 12d |
| A54820 |  | Install Manhole | 4d | 2026-11-24 | 2026-11-28 | A54800 | 18d |
| A54830 |  | Testing & Inspection | 2d | 2026-12-03 | 2026-12-05 | A54810 | 12d |
| A54840 |  | Backfilling & Compaction | 4d | 2026-12-06 | 2026-12-09 | A54830, A54820, A54790 | 12d |
|  | MH-3.16.7 / MH-3.16.8 | **MH-3.16.7 / MH-3.16.8** |  | 2026-11-24 | 2026-12-14 |  |  |
| A54850 |  | Excavation | 4d | 2026-11-24 | 2026-11-28 | A54800, A1990 | 1d |
| A54860 |  | Pipe Laying | 8d | 2026-11-29 | 2026-12-07 | A54850 | 12d |
| A54870 |  | Install Manhole | 4d | 2026-11-29 | 2026-12-02 | A54850 | 18d |
| A54880 |  | Testing & Inspection | 2d | 2026-12-08 | 2026-12-09 | A54860 | 12d |
| A54890 |  | Backfilling & Compaction | 4d | 2026-12-10 | 2026-12-14 | A54880, A54870, A54840 | 12d |
|  | MH-3.16.7.0 / MH-3.16.7.1 | **MH-3.16.7.0 / MH-3.16.7.1** |  | 2026-11-29 | 2026-12-19 |  |  |
| A54900 |  | Excavation | 4d | 2026-11-29 | 2026-12-02 | A54850, A1990 | 1d |
| A54910 |  | Pipe Laying | 8d | 2026-12-03 | 2026-12-12 | A54900 | 12d |
| A54920 |  | Install Manhole | 4d | 2026-12-03 | 2026-12-07 | A54900 | 18d |
| A54930 |  | Testing & Inspection | 2d | 2026-12-13 | 2026-12-14 | A54910 | 12d |
| A54940 |  | Backfilling & Compaction | 4d | 2026-12-15 | 2026-12-19 | A54930, A54920, A54890 | 12d |
|  | MH-3.16.8 / MH-3.16.9 | **MH-3.16.8 / MH-3.16.9** |  | 2026-12-03 | 2026-12-23 |  |  |
| A54950 |  | Excavation | 4d | 2026-12-03 | 2026-12-07 | A54900, A1990 | 1d |
| A54960 |  | Pipe Laying | 8d | 2026-12-08 | 2026-12-16 | A54950 | 12d |
| A54970 |  | Install Manhole | 4d | 2026-12-08 | 2026-12-12 | A54950 | 18d |
| A54980 |  | Testing & Inspection | 2d | 2026-12-17 | 2026-12-19 | A54960 | 12d |
| A54990 |  | Backfilling & Compaction | 4d | 2026-12-20 | 2026-12-23 | A54980, A54970, A54940 | 12d |
|  | MH-3.16.8.0 / MH-3.16.8.1 | **MH-3.16.8.0 / MH-3.16.8.1** |  | 2026-12-08 | 2026-12-28 |  |  |
| A55000 |  | Excavation | 4d | 2026-12-08 | 2026-12-12 | A54950, A1990 | 1d |
| A55010 |  | Pipe Laying | 4d | 2026-12-13 | 2026-12-16 | A55000 | 16d |
| A55020 |  | Install Manhole | 4d | 2026-12-13 | 2026-12-16 | A55000 | 18d |
| A55030 |  | Testing & Inspection | 2d | 2026-12-17 | 2026-12-19 | A55010 | 16d |
| A55040 |  | Backfilling & Compaction | 4d | 2026-12-24 | 2026-12-28 | A55030, A55020, A54990 | 12d |

| ID | WBS | Task | Duration | Start | Finish | Predecessors | Total float |
| --- | --- | --- | --- | --- | --- | --- | --- |
|  | MH-3.16.9 / MH-3.16.10 | **MH-3.16.9 / MH-3.16.10** |  | 2026-12-13 | 2027-01-02 |  |  |
| A55050 |  | Excavation | 4d | 2026-12-13 | 2026-12-16 | A55000, A1990 | 1d |
| A55060 |  | Pipe Laying | 8d | 2026-12-17 | 2026-12-26 | A55050 | 12d |
| A55070 |  | Install Manhole | 4d | 2026-12-17 | 2026-12-21 | A55050 | 18d |
| A55080 |  | Testing & Inspection | 2d | 2026-12-27 | 2026-12-28 | A55060 | 12d |
| A55090 |  | Backfilling & Compaction | 4d | 2026-12-29 | 2027-01-02 | A55080, A55070, A55040 | 12d |
|  | MH-3.16.9.0 / MH-3.16.9.1 | **MH-3.16.9.0 / MH-3.16.9.1** |  | 2026-12-17 | 2027-01-19 |  |  |
| A55100 |  | Excavation | 10d | 2026-12-17 | 2026-12-28 | A55050, A1990 | 1d |
| A55110 |  | Pipe Laying | 12d | 2026-12-29 | 2027-01-11 | A55100 | 2d |
| A55120 |  | Install Manhole | 15d | 2026-12-29 | 2027-01-14 | A55100 | 1d |
| A55130 |  | Testing & Inspection | 2d | 2027-01-12 | 2027-01-13 | A55110 | 2d |
| A55140 |  | Backfilling & Compaction | 4d | 2027-01-16 | 2027-01-19 | A55130, A55120, A55090 | 1d |
|  | LR 27 | **LR 27** |  | 2026-03-16 | 2026-05-28 |  |  |
|  | MH-3.16 / MH-3.17 | **MH-3.16 / MH-3.17** |  | 2026-04-09 | 2026-05-05 |  |  |
| A55500 |  | Excavation | 3d | 2026-04-09 | 2026-04-12 | A55450, A1990 | 66d |
| A55510 |  | Pipe Laying | 8d | 2026-04-13 | 2026-04-21 | A55500 | 109d |
| A55520 |  | Install Manhole | 4d | 2026-04-13 | 2026-04-16 | A55500 | 115d |
| A55530 |  | Testing & Inspection | 2d | 2026-04-22 | 2026-04-23 | A55510 | 109d |
| A55540 |  | Backfilling & Compaction | 4d | 2026-05-02 | 2026-05-05 | A55530, A55520, A55490 | 103d |
|  | MH-3.17 / MH-3.18 | **MH-3.17 / MH-3.18** |  | 2026-04-13 | 2026-05-10 |  |  |
| A55550 |  | Excavation | 3d | 2026-04-13 | 2026-04-15 | A55500, A1990 | 66d |
| A55560 |  | Pipe Laying | 8d | 2026-04-16 | 2026-04-25 | A55550 | 110d |
| A55570 |  | Install Manhole | 4d | 2026-04-16 | 2026-04-20 | A55550 | 116d |
| A55580 |  | Testing & Inspection | 2d | 2026-04-26 | 2026-04-27 | A55560 | 110d |
| A55590 |  | Backfilling & Compaction | 4d | 2026-05-06 | 2026-05-10 | A55580, A55570, A55540 | 103d |
|  | MH-3.17.0 / MH-3.17.1 | **MH-3.17.0 / MH-3.17.1** |  | 2026-03-16 | 2026-03-30 |  |  |
| A55150 |  | Excavation | 3d | 2026-03-16 | 2026-03-18 | A75370, A1990 | 66d |
| A55160 |  | Pipe Laying | 4d | 2026-03-19 | 2026-03-23 | A55150 | 106d |
| A55170 |  | Install Manhole | 4d | 2026-03-19 | 2026-03-23 | A55150 | 108d |
| A55180 |  | Testing & Inspection | 2d | 2026-03-24 | 2026-03-25 | A55160 | 106d |
| A55190 |  | Backfilling & Compaction | 4d | 2026-03-26 | 2026-03-30 | A55180, A55170 | 106d |
|  | MH-3.18 / MH-3.19 | **MH-3.18 / MH-3.19** |  | 2026-04-16 | 2026-05-14 |  |  |
| A55600 |  | Excavation | 3d | 2026-04-16 | 2026-04-19 | A55550, A1990 | 66d |
| A55610 |  | Pipe Laying | 8d | 2026-04-20 | 2026-04-28 | A55600 | 111d |
| A55620 |  | Install Manhole | 4d | 2026-04-20 | 2026-04-23 | A55600 | 117d |
| A55630 |  | Testing & Inspection | 2d | 2026-04-29 | 2026-04-30 | A55610 | 111d |
| A55640 |  | Backfilling & Compaction | 4d | 2026-05-11 | 2026-05-14 | A55630, A55620, A55590 | 103d |
|  | MH-3.18.0 / MH-3.18.1 | **MH-3.18.0 / MH-3.18.1** |  | 2026-03-19 | 2026-04-07 |  |  |
| A55200 |  | Excavation | 3d | 2026-03-19 | 2026-03-22 | A55150, A1990 | 66d |
| A55210 |  | Pipe Laying | 8d | 2026-03-23 | 2026-03-31 | A55200 | 103d |
| A55220 |  | Install Manhole | 4d | 2026-03-23 | 2026-03-26 | A55200 | 109d |
| A55230 |  | Testing & Inspection | 2d | 2026-04-01 | 2026-04-02 | A55210 | 103d |
| A55240 |  | Backfilling & Compaction | 4d | 2026-04-04 | 2026-04-07 | A55230, A55220, A55190 | 103d |
|  | MH-3.19 / MH-3.20 | **MH-3.19 / MH-3.20** |  | 2026-04-20 | 2026-05-19 |  |  |
| A55650 |  | Excavation | 3d | 2026-04-20 | 2026-04-22 | A55600, A1990 | 66d |
| A55660 |  | Pipe Laying | 8d | 2026-04-23 | 2026-05-02 | A55650 | 112d |
| A55670 |  | Install Manhole | 4d | 2026-04-23 | 2026-04-27 | A55650 | 118d |
| A55680 |  | Testing & Inspection | 2d | 2026-05-03 | 2026-05-04 | A55660 | 112d |
| A55690 |  | Backfilling & Compaction | 4d | 2026-05-16 | 2026-05-19 | A55680, A55670, A55640 | 103d |
|  | MH-3.19.0 / MH-3.19.1 | **MH-3.19.0 / MH-3.19.1** |  | 2026-03-23 | 2026-04-12 |  |  |
| A55250 |  | Excavation | 3d | 2026-03-23 | 2026-03-25 | A55200, A1990 | 66d |
| A55260 |  | Pipe Laying | 8d | 2026-03-26 | 2026-04-04 | A55250 | 104d |
| A55270 |  | Install Manhole | 4d | 2026-03-26 | 2026-03-30 | A55250 | 110d |
| A55280 |  | Testing & Inspection | 2d | 2026-04-05 | 2026-04-06 | A55260 | 104d |
| A55290 |  | Backfilling & Compaction | 4d | 2026-04-08 | 2026-04-12 | A55280, A55270, A55240 | 103d |
|  | MH-3.20 / MH-3.21 | **MH-3.20 / MH-3.21** |  | 2026-04-23 | 2026-05-24 |  |  |
| A55700 |  | Excavation | 3d | 2026-04-23 | 2026-04-26 | A55650, A1990 | 66d |
| A55710 |  | Pipe Laying | 8d | 2026-04-27 | 2026-05-05 | A55700 | 113d |
| A55720 |  | Install Manhole | 4d | 2026-04-27 | 2026-04-30 | A55700 | 119d |
| A55730 |  | Testing & Inspection | 2d | 2026-05-06 | 2026-05-07 | A55710 | 113d |
| A55740 |  | Backfilling & Compaction | 4d | 2026-05-20 | 2026-05-24 | A55730, A55720, A55690 | 103d |
|  | MH-3.20.0 / MH-3.20.1 | **MH-3.20.0 / MH-3.20.1** |  | 2026-03-26 | 2026-04-16 |  |  |
| A55300 |  | Excavation | 3d | 2026-03-26 | 2026-03-29 | A55250, A1990 | 66d |
| A55310 |  | Pipe Laying | 8d | 2026-03-30 | 2026-04-07 | A55300 | 105d |
| A55320 |  | Install Manhole | 4d | 2026-03-30 | 2026-04-02 | A55300 | 111d |
| A55330 |  | Testing & Inspection | 2d | 2026-04-08 | 2026-04-09 | A55310 | 105d |
| A55340 |  | Backfilling & Compaction | 4d | 2026-04-13 | 2026-04-16 | A55330, A55320, A55290 | 103d |
|  | MH-3.21 / MH-3.22 | **MH-3.21 / MH-3.22** |  | 2026-04-27 | 2026-05-28 |  |  |
| A55750 |  | Excavation | 3d | 2026-04-27 | 2026-04-29 | A55700, A1990 | 66d |
| A55760 |  | Pipe Laying | 8d | 2026-04-30 | 2026-05-09 | A55750 | 114d |

| ID | WBS | Task | Duration | Start | Finish | Predecessors | Total float |
| --- | --- | --- | --- | --- | --- | --- | --- |
| A55770 |  | Install Manhole | 4d | 2026-04-30 | 2026-05-04 | A55750 | 120d |
| A55780 |  | Testing & Inspection | 2d | 2026-05-10 | 2026-05-11 | A55760 | 114d |
| A55790 |  | Backfilling & Compaction | 4d | 2026-05-25 | 2026-05-28 | A55780, A55770, A55740, A75170 | 103d |
|  | MH-3.21.0 / MH-3.21.1 | **MH-3.21.0 / MH-3.21.1** |  | 2026-03-30 | 2026-04-21 |  |  |
| A55350 |  | Excavation | 3d | 2026-03-30 | 2026-04-01 | A55300, A1990 | 66d |
| A55360 |  | Pipe Laying | 8d | 2026-04-02 | 2026-04-11 | A55350 | 106d |
| A55370 |  | Install Manhole | 4d | 2026-04-02 | 2026-04-06 | A55350 | 112d |
| A55380 |  | Testing & Inspection | 2d | 2026-04-12 | 2026-04-13 | A55360 | 106d |
| A55390 |  | Backfilling & Compaction | 4d | 2026-04-18 | 2026-04-21 | A55380, A55370, A55340 | 103d |
|  | MH-3.22 / MH-3.23 | **MH-3.22 / MH-3.23** |  | 2026-04-02 | 2026-04-26 |  |  |
| A55400 |  | Excavation | 3d | 2026-04-02 | 2026-04-05 | A55350, A1990 | 66d |
| A55410 |  | Pipe Laying | 8d | 2026-04-06 | 2026-04-14 | A55400 | 107d |
| A55420 |  | Install Manhole | 4d | 2026-04-06 | 2026-04-09 | A55400 | 113d |
| A55430 |  | Testing & Inspection | 2d | 2026-04-15 | 2026-04-16 | A55410 | 107d |
| A55440 |  | Backfilling & Compaction | 4d | 2026-04-22 | 2026-04-26 | A55430, A55420, A55390 | 103d |
|  | MH-3.22.0 / MH-3.22.1 | **MH-3.22.0 / MH-3.22.1** |  | 2026-04-06 | 2026-04-30 |  |  |
| A55450 |  | Excavation | 3d | 2026-04-06 | 2026-04-08 | A55400, A1990 | 66d |
| A55460 |  | Pipe Laying | 8d | 2026-04-09 | 2026-04-18 | A55450 | 108d |
| A55470 |  | Install Manhole | 4d | 2026-04-09 | 2026-04-13 | A55450 | 114d |
| A55480 |  | Testing & Inspection | 2d | 2026-04-19 | 2026-04-20 | A55460 | 108d |
| A55490 |  | Backfilling & Compaction | 4d | 2026-04-27 | 2026-04-30 | A55480, A55470, A55440 | 103d |
|  | IRRN1 | **IRRIGATION NETWORK-1** |  | 2026-10-04 | 2027-02-01 |  |  |
|  | R1 | **Road 18** |  | 2026-10-13 | 2026-12-21 |  |  |
| A90020 |  | Trench Excavation | 10d | 2026-10-13 | 2026-10-24 | A87800, A58910 | 38d |
| A89960 |  | Pipe Laying | 10d | 2026-10-25 | 2026-11-04 | A90020 | 38d |
| A89970 |  | Road Crossing Works | 10d | 2026-11-05 | 2026-11-16 | A89960 | 58d |
| A89980 |  | Valve Chambers Civil Works | 10d | 2026-11-05 | 2026-11-16 | A89960 | 38d |
| A89990 |  | Valve Installation | 10d | 2026-11-17 | 2026-11-28 | A89980 | 38d |
| A90000 |  | Testing | 10d | 2026-11-29 | 2026-12-09 | A89990 | 38d |
| A90010 |  | Backfilling | 10d | 2026-12-10 | 2026-12-21 | A90000, A89970 | 38d |
|  | R11 | **Road 19** |  | 2026-10-13 | 2026-12-21 |  |  |
| A90090 |  | Trench Excavation | 10d | 2026-10-13 | 2026-10-24 | A87870, A58910 | 38d |
| A90030 |  | Pipe Laying | 10d | 2026-10-25 | 2026-11-04 | A90090 | 38d |
| A90040 |  | Road Crossing Works | 10d | 2026-11-05 | 2026-11-16 | A90030 | 58d |
| A90050 |  | Valve Chambers Civil Works | 10d | 2026-11-05 | 2026-11-16 | A90030 | 38d |
| A90060 |  | Valve Installation | 10d | 2026-11-17 | 2026-11-28 | A90050 | 38d |
| A90070 |  | Testing | 10d | 2026-11-29 | 2026-12-09 | A90060 | 38d |
| A90080 |  | Backfilling | 10d | 2026-12-10 | 2026-12-21 | A90070, A90040 | 38d |
|  | R1111 | **Road 21** |  | 2026-10-13 | 2026-12-21 |  |  |
| A90230 |  | Trench Excavation | 10d | 2026-10-13 | 2026-10-24 | A88010, A58910 | 38d |
| A90170 |  | Pipe Laying | 10d | 2026-10-25 | 2026-11-04 | A90230 | 38d |
| A90180 |  | Road Crossing Works | 10d | 2026-11-05 | 2026-11-16 | A90170 | 58d |
| A90190 |  | Valve Chambers Civil Works | 10d | 2026-11-05 | 2026-11-16 | A90170 | 38d |
| A90200 |  | Valve Installation | 10d | 2026-11-17 | 2026-11-28 | A90190 | 38d |
| A90210 |  | Testing | 10d | 2026-11-29 | 2026-12-09 | A90200 | 38d |
| A90220 |  | Backfilling | 10d | 2026-12-10 | 2026-12-21 | A90210, A90180 | 38d |
|  | R112 | **Road 20** |  | 2026-10-13 | 2026-12-21 |  |  |
| A90160 |  | Trench Excavation | 10d | 2026-10-13 | 2026-10-24 | A87940, A58910 | 38d |
| A90100 |  | Pipe Laying | 10d | 2026-10-25 | 2026-11-04 | A90160 | 38d |
| A90110 |  | Road Crossing Works | 10d | 2026-11-05 | 2026-11-16 | A90100 | 58d |
| A90120 |  | Valve Chambers Civil Works | 10d | 2026-11-05 | 2026-11-16 | A90100 | 38d |
| A90130 |  | Valve Installation | 10d | 2026-11-17 | 2026-11-28 | A90120 | 38d |
| A90140 |  | Testing | 10d | 2026-11-29 | 2026-12-09 | A90130 | 38d |
| A90150 |  | Backfilling | 10d | 2026-12-10 | 2026-12-21 | A90140, A90110 | 38d |
|  | R121 | **Road 22** |  | 2026-10-13 | 2026-12-21 |  |  |
| A90300 |  | Trench Excavation | 10d | 2026-10-13 | 2026-10-24 | A88080, A58910 | 38d |
| A90240 |  | Pipe Laying | 10d | 2026-10-25 | 2026-11-04 | A90300 | 38d |
| A90250 |  | Road Crossing Works | 10d | 2026-11-05 | 2026-11-16 | A90240 | 58d |
| A90260 |  | Valve Chambers Civil Works | 10d | 2026-11-05 | 2026-11-16 | A90240 | 38d |
| A90270 |  | Valve Installation | 10d | 2026-11-17 | 2026-11-28 | A90260 | 38d |
| A90280 |  | Testing | 10d | 2026-11-29 | 2026-12-09 | A90270 | 38d |
| A90290 |  | Backfilling | 10d | 2026-12-10 | 2026-12-21 | A90280, A90250 | 38d |
|  | R1121 | **Road 24** |  | 2026-10-13 | 2026-12-21 |  |  |
| A89950 |  | Trench Excavation | 10d | 2026-10-13 | 2026-10-24 | A88500, A58910 | 38d |
| A89890 |  | Pipe Laying | 10d | 2026-10-25 | 2026-11-04 | A89950 | 38d |
| A89900 |  | Road Crossing Works | 10d | 2026-11-05 | 2026-11-16 | A89890 | 58d |
| A89910 |  | Valve Chambers Civil Works | 10d | 2026-11-05 | 2026-11-16 | A89890 | 38d |
| A89920 |  | Valve Installation | 10d | 2026-11-17 | 2026-11-28 | A89910 | 38d |
| A89930 |  | Testing | 10d | 2026-11-29 | 2026-12-09 | A89920 | 38d |
| A89940 |  | Backfilling | 10d | 2026-12-10 | 2026-12-21 | A89930, A89900 | 38d |

| ID | WBS | Task | Duration | Start | Finish | Predecessors | Total float |
| --- | --- | --- | --- | --- | --- | --- | --- |
|  | R113 | **Road 23** |  | 2026-10-29 | 2027-01-06 |  |  |
| A90370 |  | Trench Excavation | 10d | 2026-10-29 | 2026-11-09 | A88570, A58910 | 24d |
| A90310 |  | Pipe Laying | 10d | 2026-11-10 | 2026-11-21 | A90370 | 24d |
| A90320 |  | Road Crossing Works | 10d | 2026-11-22 | 2026-12-02 | A90310 | 44d |
| A90330 |  | Valve Chambers Civil Works | 10d | 2026-11-22 | 2026-12-02 | A90310 | 24d |
| A90340 |  | Valve Installation | 10d | 2026-12-03 | 2026-12-14 | A90330 | 24d |
| A90350 |  | Testing | 10d | 2026-12-15 | 2026-12-26 | A90340 | 24d |
| A90360 |  | Backfilling | 10d | 2026-12-27 | 2027-01-06 | A90350, A90320 | 24d |
|  | R11111 | **Road 25** |  | 2026-10-13 | 2026-12-21 |  |  |
| A90440 |  | Trench Excavation | 10d | 2026-10-13 | 2026-10-24 | A88430, A58910 | 38d |
| A90380 |  | Pipe Laying | 10d | 2026-10-25 | 2026-11-04 | A90440 | 38d |
| A90390 |  | Road Crossing Works | 10d | 2026-11-05 | 2026-11-16 | A90380 | 58d |
| A90400 |  | Valve Chambers Civil Works | 10d | 2026-11-05 | 2026-11-16 | A90380 | 38d |
| A90410 |  | Valve Installation | 10d | 2026-11-17 | 2026-11-28 | A90400 | 38d |
| A90420 |  | Testing | 10d | 2026-11-29 | 2026-12-09 | A90410 | 38d |
| A90430 |  | Backfilling | 10d | 2026-12-10 | 2026-12-21 | A90420, A90390 | 38d |
|  | R13 | **Road 26** |  | 2026-11-17 | 2027-01-25 |  |  |
| A90510 |  | Trench Excavation | 10d | 2026-11-17 | 2026-11-28 | A88360, A58910 | 8d |
| A90450 |  | Pipe Laying | 10d | 2026-11-29 | 2026-12-09 | A90510 | 8d |
| A90460 |  | Road Crossing Works | 10d | 2026-12-10 | 2026-12-21 | A90450 | 28d |
| A90470 |  | Valve Chambers Civil Works | 10d | 2026-12-10 | 2026-12-21 | A90450 | 8d |
| A90480 |  | Valve Installation | 10d | 2026-12-22 | 2027-01-02 | A90470 | 8d |
| A90490 |  | Testing | 10d | 2027-01-03 | 2027-01-13 | A90480 | 8d |
| A90500 |  | Backfilling | 10d | 2027-01-14 | 2027-01-25 | A90490, A90460 | 8d |
|  | R12 | **Road 27** |  | 2026-10-04 | 2026-12-12 |  |  |
| A90580 |  | Trench Excavation | 10d | 2026-10-04 | 2026-10-14 | A88290, A58910 | 46d |
| A90520 |  | Pipe Laying | 10d | 2026-10-15 | 2026-10-26 | A90580 | 46d |
| A90530 |  | Road Crossing Works | 10d | 2026-10-27 | 2026-11-07 | A90520 | 66d |
| A90540 |  | Valve Chambers Civil Works | 10d | 2026-10-27 | 2026-11-07 | A90520 | 46d |
| A90550 |  | Valve Installation | 10d | 2026-11-08 | 2026-11-18 | A90540 | 46d |
| A90560 |  | Testing | 10d | 2026-11-19 | 2026-11-30 | A90550 | 46d |
| A90570 |  | Backfilling | 10d | 2026-12-01 | 2026-12-12 | A90560, A90530 | 46d |
|  | R111 | **Collector 2** |  | 2026-10-13 | 2026-12-21 |  |  |
| A90860 |  | Trench Excavation | 10d | 2026-10-13 | 2026-10-24 | A88220, A58910 | 38d |
| A90800 |  | Pipe Laying | 10d | 2026-10-25 | 2026-11-04 | A90860 | 38d |
| A90810 |  | Road Crossing Works | 10d | 2026-11-05 | 2026-11-16 | A90800 | 58d |
| A90820 |  | Valve Chambers Civil Works | 10d | 2026-11-05 | 2026-11-16 | A90800 | 38d |
| A90830 |  | Valve Installation | 10d | 2026-11-17 | 2026-11-28 | A90820 | 38d |
| A90840 |  | Testing | 10d | 2026-11-29 | 2026-12-09 | A90830 | 38d |
| A90850 |  | Backfilling | 10d | 2026-12-10 | 2026-12-21 | A90840, A90810 | 38d |
|  | R1112 | **Arterial 1** |  | 2026-10-22 | 2026-12-21 |  |  |
| A90930 |  | Trench Excavation | 10d | 2026-10-22 | 2026-11-02 | A88150, A58910 | 2d |
| A90870 |  | Pipe Laying | 10d | 2026-11-03 | 2026-11-14 | A90930 | 38d |
| A90880 |  | Road Crossing Works | 10d | 2026-11-15 | 2026-11-25 | A90870 | 50d |
| A90890 |  | Valve Chambers Civil Works | 10d | 2026-11-15 | 2026-11-25 | A90870 | 38d |
| A90900 |  | Valve Installation | 10d | 2026-11-26 | 2026-12-07 | A90890 | 38d |
| A90910 |  | Testing | 2d | 2026-12-08 | 2026-12-09 | A90900 | 38d |
| A90920 |  | Backfilling | 10d | 2026-12-10 | 2026-12-21 | A90910, A90880 | 38d |
|  | R122 | **Arterial 2** |  | 2026-11-03 | 2027-01-11 |  |  |
| A90790 |  | Trench Excavation | 10d | 2026-11-03 | 2026-11-14 | A90930, A58910 | 2d |
| A90730 |  | Pipe Laying | 10d | 2026-11-15 | 2026-11-25 | A90790 | 20d |
| A90740 |  | Road Crossing Works | 10d | 2026-11-26 | 2026-12-07 | A90730 | 40d |
| A90750 |  | Valve Chambers Civil Works | 10d | 2026-11-26 | 2026-12-07 | A90730 | 20d |
| A90760 |  | Valve Installation | 10d | 2026-12-08 | 2026-12-19 | A90750 | 20d |
| A90770 |  | Testing | 10d | 2026-12-20 | 2026-12-30 | A90760 | 20d |
| A90780 |  | Backfilling | 10d | 2026-12-31 | 2027-01-11 | A90770, A90740 | 20d |
|  | R111111 | **ROUND ABOUT 1** |  | 2026-11-15 | 2027-01-23 |  |  |
| A90650 |  | Trench Excavation | 10d | 2026-11-15 | 2026-11-25 | A90790, A58910 | 2d |
| A90590 |  | Pipe Laying | 10d | 2026-11-26 | 2026-12-07 | A90650 | 10d |
| A90600 |  | Road Crossing Works | 10d | 2026-12-08 | 2026-12-19 | A90590 | 30d |
| A90610 |  | Valve Chambers Civil Works | 10d | 2026-12-08 | 2026-12-19 | A90590 | 10d |
| A90620 |  | Valve Installation | 10d | 2026-12-20 | 2026-12-30 | A90610 | 10d |
| A90630 |  | Testing | 10d | 2026-12-31 | 2027-01-11 | A90620 | 10d |
| A90640 |  | Backfilling | 10d | 2027-01-12 | 2027-01-23 | A90630, A90600 | 10d |
|  | R131 | **ROUND ABOUT 2** |  | 2026-11-26 | 2027-02-01 |  |  |
| A90720 |  | Trench Excavation | 10d | 2026-11-26 | 2026-12-07 | A90650, A58910 | 2d |
| A90660 |  | Pipe Laying | 10d | 2026-12-08 | 2026-12-19 | A90720 | 2d |
| A90670 |  | Road Crossing Works | 10d | 2026-12-20 | 2026-12-30 | A90660 | 22d |
| A90680 |  | Valve Chambers Civil Works | 10d | 2026-12-20 | 2026-12-30 | A90660 | 2d |
| A90690 |  | Valve Installation | 10d | 2026-12-31 | 2027-01-11 | A90680 | 2d |

| ID | WBS | Task | Duration | Start | Finish | Predecessors | Total float |
| --- | --- | --- | --- | --- | --- | --- | --- |
| A90700 |  | Testing | 10d | 2027-01-12 | 2027-01-23 | A90690 | 2d |
| A90710 |  | Backfilling | 8d | 2027-01-24 | 2027-02-01 | A90700, A90670 | 2d |
|  | ROL | **ROAD LIGHING** |  | 2027-06-30 | 2027-11-20 |  |  |
|  | 1 | **PSS 8714 - loop 01 Zone B** |  | 2027-06-30 | 2027-11-20 |  |  |
| A86410 |  | Trenching for lighting network | 10d | 2027-06-30 | 2027-07-11 | A86160, A63620 | 5d |
| A86440 |  | LV cable laying & termination / Backfilling | 12d | 2027-07-11 | 2027-07-24 | A86410 SS+6d, A10730, A10740, A10760 | 32d |
| A86450 |  | Street lighting sub-station construction & installation | 16d | 2027-07-25 | 2027-08-11 | A86440, A10750 | 32d |
| A86430 |  | Installation of lighting poles foundations | 14d | 2027-08-26 | 2027-09-11 | A86440 SS+6d, A10810 | 55d |
| A86420 |  | Installation of lighting poles & luminaires | 14d | 2027-11-04 | 2027-11-20 | A86430 SS+6d, A86430 FF+6d, A10800, A10810 | 1d |
|  | 4 | **PSS 8714 - loop 02 Zone B** |  | 2027-07-12 | 2027-11-20 |  |  |
| A86460 |  | Trenching for lighting network | 10d | 2027-07-12 | 2027-07-22 | A86230, A86410 | 5d |
| A86490 |  | LV cable laying & termination / Backfilling | 12d | 2027-07-19 | 2027-08-01 | A86460 SS+6d, A10730, A10740, A10760 | 25d |
| A86500 |  | Street lighting sub-station construction & installation | 16d | 2027-08-02 | 2027-08-19 | A86490, A10750 | 25d |
| A86480 |  | Installation of lighting poles foundations | 14d | 2027-08-26 | 2027-09-11 | A86490 SS+6d, A10810 | 55d |
| A86470 |  | Installation of lighting poles & luminaires | 14d | 2027-11-04 | 2027-11-20 | A86480 SS+6d, A86480 FF+6d, A10800, A10810 | 1d |
|  | 5 | **PSS 8714 - loop 03 Zone B** |  | 2027-07-24 | 2027-11-20 |  |  |
| A86510 |  | Trenching for lighting network | 10d | 2027-07-24 | 2027-08-03 | A86300, A86460 | 5d |
| A86540 |  | LV cable laying & termination / Backfilling | 12d | 2027-07-31 | 2027-08-12 | A86510 SS+6d, A10730, A10740, A10760 | 15d |
| A86550 |  | Street lighting sub-station construction & installation | 16d | 2027-08-14 | 2027-08-31 | A86540, A10750 | 15d |
| A86530 |  | Installation of lighting poles foundations | 14d | 2027-08-26 | 2027-09-11 | A86540 SS+6d, A10810 | 55d |
| A86520 |  | Installation of lighting poles & luminaires | 14d | 2027-11-04 | 2027-11-20 | A86530 SS+6d, A86530 FF+6d, A10800, A10810 | 1d |
|  | 6 | **PSS 8714 - loop 04 Zone B** |  | 2027-08-04 | 2027-11-20 |  |  |
| A86560 |  | Trenching for lighting network | 10d | 2027-08-04 | 2027-08-15 | A86370, A86510 | 5d |
| A86590 |  | LV cable laying & termination / Backfilling | 12d | 2027-08-11 | 2027-08-24 | A86560 SS+6d, A86560 FF+6d, A10730, A10740, A10760 | 5d |
| A86600 |  | Street lighting sub-station construction & installation | 16d | 2027-08-25 | 2027-09-12 | A86590, A10750 | 5d |
| A86580 |  | Installation of lighting poles foundations | 14d | 2027-08-26 | 2027-09-11 | A86590 SS+6d, A10810 | 55d |
| A86570 |  | Installation of lighting poles & luminaires | 14d | 2027-11-04 | 2027-11-20 | A86580 SS+6d, A86580 FF+6d, A10800, A10810 | 1d |
|  | 1 | **TELECOMMUNICATION** |  | 2026-09-24 | 2027-02-02 |  |  |
|  | RR18 | **Road 18** |  | 2026-09-24 | 2027-02-02 |  |  |
| A91840 |  | Excavation | 14d | 2026-09-24 | 2026-10-10 | A63920, A58910 | 44d |
| A91850 |  | Duct Jointing & Laying | 14d | 2026-10-11 | 2026-10-26 | A91840 | 44d |
| A91860 |  | Road Crossing Encasement | 14d | 2026-10-27 | 2026-11-11 | A91850 | 44d |
| A91870 |  | Manhole Civil Works | 14d | 2027-01-02 | 2027-01-17 | A91860, A10250, A11110 | 1d |
| A91880 |  | Backfilling & Compaction | 14d | 2027-01-18 | 2027-02-02 | A91870 | 1d |
|  | R19 | **Road 19** |  | 2026-09-24 | 2027-02-02 |  |  |
| A91890 |  | Excavation | 14d | 2026-09-24 | 2026-10-10 | A63920, A58910 | 44d |
| A91900 |  | Duct Jointing & Laying | 14d | 2026-10-11 | 2026-10-26 | A91890 | 44d |
| A91910 |  | Road Crossing Encasement | 14d | 2026-10-27 | 2026-11-11 | A91900 | 44d |
| A91920 |  | Manhole Civil Works | 14d | 2027-01-02 | 2027-01-17 | A91910, A10250, A11110 | 1d |
| A91930 |  | Backfilling & Compaction | 14d | 2027-01-18 | 2027-02-02 | A91920 | 1d |
|  | R20 | **Road 20** |  | 2026-09-24 | 2027-02-02 |  |  |
| A91940 |  | Excavation | 14d | 2026-09-24 | 2026-10-10 | A63920, A58910 | 44d |
| A91950 |  | Duct Jointing & Laying | 14d | 2026-10-11 | 2026-10-26 | A91940 | 44d |
| A91960 |  | Road Crossing Encasement | 14d | 2026-10-27 | 2026-11-11 | A91950 | 44d |
| A91970 |  | Manhole Civil Works | 14d | 2027-01-02 | 2027-01-17 | A91960, A10250, A11110 | 1d |
| A91980 |  | Backfilling & Compaction | 14d | 2027-01-18 | 2027-02-02 | A91970 | 1d |
|  | 21 | **Road 21** |  | 2026-09-24 | 2027-02-02 |  |  |
| A92040 |  | Excavation | 14d | 2026-09-24 | 2026-10-10 | A63920, A58910 | 44d |
| A92050 |  | Duct Jointing & Laying | 14d | 2026-10-11 | 2026-10-26 | A92040 | 44d |
| A92060 |  | Road Crossing Encasement | 14d | 2026-10-27 | 2026-11-11 | A92050 | 44d |
| A92070 |  | Manhole Civil Works | 14d | 2027-01-02 | 2027-01-17 | A92060, A10250, A11110 | 1d |
| A92080 |  | Backfilling & Compaction | 14d | 2027-01-18 | 2027-02-02 | A92070 | 1d |
|  | R22 | **Road 22** |  | 2026-09-24 | 2027-02-02 |  |  |
| A91990 |  | Excavation | 14d | 2026-09-24 | 2026-10-10 | A63920, A58910 | 44d |
| A92000 |  | Duct Jointing & Laying | 14d | 2026-10-11 | 2026-10-26 | A91990 | 44d |
| A92010 |  | Road Crossing Encasement | 14d | 2026-10-27 | 2026-11-11 | A92000 | 44d |
| A92020 |  | Manhole Civil Works | 14d | 2027-01-02 | 2027-01-17 | A92010, A10250, A11110 | 1d |
| A92030 |  | Backfilling & Compaction | 14d | 2027-01-18 | 2027-02-02 | A92020 | 1d |
|  | R23 | **Road 23** |  | 2026-09-24 | 2027-02-02 |  |  |
| A92090 |  | Excavation | 14d | 2026-09-24 | 2026-10-10 | A63920, A58910 | 44d |
| A92100 |  | Duct Jointing & Laying | 14d | 2026-10-11 | 2026-10-26 | A92090 | 44d |
| A92110 |  | Road Crossing Encasement | 14d | 2026-10-27 | 2026-11-11 | A92100 | 44d |
| A92120 |  | Manhole Civil Works | 14d | 2027-01-02 | 2027-01-17 | A92110, A10250, A11110 | 1d |
| A92130 |  | Backfilling & Compaction | 14d | 2027-01-18 | 2027-02-02 | A92120 | 1d |
|  | R24 | **Road 24** |  | 2026-09-24 | 2027-02-02 |  |  |
| A92140 |  | Excavation | 14d | 2026-09-24 | 2026-10-10 | A63920, A58910 | 44d |
| A92150 |  | Duct Jointing & Laying | 14d | 2026-10-11 | 2026-10-26 | A92140 | 44d |
| A92160 |  | Road Crossing Encasement | 14d | 2026-10-27 | 2026-11-11 | A92150 | 44d |
| A92170 |  | Manhole Civil Works | 14d | 2027-01-02 | 2027-01-17 | A92160, A10250, A11110 | 1d |
| A92180 |  | Backfilling & Compaction | 14d | 2027-01-18 | 2027-02-02 | A92170 | 1d |

| ID | WBS | Task | Duration | Start | Finish | Predecessors | Total float |
| --- | --- | --- | --- | --- | --- | --- | --- |
|  | R25 | **Road 25** |  | 2026-09-24 | 2027-02-02 |  |  |
| A92190 |  | Excavation | 14d | 2026-09-24 | 2026-10-10 | A63920, A58910 | 44d |
| A92200 |  | Duct Jointing & Laying | 14d | 2026-10-11 | 2026-10-26 | A92190 | 44d |
| A92210 |  | Road Crossing Encasement | 14d | 2026-10-27 | 2026-11-11 | A92200 | 44d |
| A92220 |  | Manhole Civil Works | 14d | 2027-01-02 | 2027-01-17 | A92210, A10250, A11110 | 1d |
| A92230 |  | Backfilling & Compaction | 14d | 2027-01-18 | 2027-02-02 | A92220 | 1d |
|  | R26 | **Road 26** |  | 2026-09-24 | 2027-02-02 |  |  |
| A92240 |  | Excavation | 14d | 2026-09-24 | 2026-10-10 | A63920, A58910 | 44d |
| A92250 |  | Duct Jointing & Laying | 14d | 2026-10-11 | 2026-10-26 | A92240 | 44d |
| A92260 |  | Road Crossing Encasement | 14d | 2026-10-27 | 2026-11-11 | A92250 | 44d |
| A92270 |  | Manhole Civil Works | 14d | 2027-01-02 | 2027-01-17 | A92260, A10250, A11110 | 1d |
| A92280 |  | Backfilling & Compaction | 14d | 2027-01-18 | 2027-02-02 | A92270 | 1d |
|  | R27 | **Road 27** |  | 2026-09-24 | 2027-02-02 |  |  |
| A92290 |  | Excavation | 14d | 2026-09-24 | 2026-10-10 | A63920, A58910 | 44d |
| A92300 |  | Duct Jointing & Laying | 14d | 2026-10-11 | 2026-10-26 | A92290 | 44d |
| A92310 |  | Road Crossing Encasement | 14d | 2026-10-27 | 2026-11-11 | A92300 | 44d |
| A92320 |  | Manhole Civil Works | 14d | 2027-01-02 | 2027-01-17 | A92310, A10250, A11110 | 1d |
| A92330 |  | Backfilling & Compaction | 14d | 2027-01-18 | 2027-02-02 | A92320 | 1d |
|  | CO2 | **Collector 2** |  | 2026-09-24 | 2027-02-02 |  |  |
| A92340 |  | Excavation | 14d | 2026-09-24 | 2026-10-10 | A63920, A58910 | 44d |
| A92350 |  | Duct Jointing & Laying | 14d | 2026-10-11 | 2026-10-26 | A92340 | 44d |
| A92360 |  | Road Crossing Encasement | 14d | 2026-10-27 | 2026-11-11 | A92350 | 44d |
| A92370 |  | Manhole Civil Works | 14d | 2027-01-02 | 2027-01-17 | A92360, A10250, A11110 | 1d |
| A92380 |  | Backfilling & Compaction | 14d | 2027-01-18 | 2027-02-02 | A92370 | 1d |
|  | ART1 | **Arterial 1** |  | 2026-09-24 | 2027-02-02 |  |  |
| A92390 |  | Excavation | 14d | 2026-09-24 | 2026-10-10 | A63920, A58910 | 44d |
| A92400 |  | Duct Jointing & Laying | 14d | 2026-10-11 | 2026-10-26 | A92390 | 44d |
| A92410 |  | Road Crossing Encasement | 14d | 2026-10-27 | 2026-11-11 | A92400 | 44d |
| A92420 |  | Manhole Civil Works | 14d | 2027-01-02 | 2027-01-17 | A92410, A10250, A11110 | 1d |
| A92430 |  | Backfilling & Compaction | 14d | 2027-01-18 | 2027-02-02 | A92420 | 1d |
|  | ART2 | **Arterial 2** |  | 2026-09-24 | 2027-02-02 |  |  |
| A92440 |  | Excavation | 14d | 2026-09-24 | 2026-10-10 | A63920, A58910 | 44d |
| A92450 |  | Duct Jointing & Laying | 14d | 2026-10-11 | 2026-10-26 | A92440 | 44d |
| A92460 |  | Road Crossing Encasement | 14d | 2026-10-27 | 2026-11-11 | A92450 | 44d |
| A92470 |  | Manhole Civil Works | 14d | 2027-01-02 | 2027-01-17 | A92460, A10250, A11110 | 1d |
| A92480 |  | Backfilling & Compaction | 14d | 2027-01-18 | 2027-02-02 | A92470 | 1d |
|  | RON1 | **ROUND ABOUT 1** |  | 2026-09-24 | 2027-02-02 |  |  |
| A92490 |  | Excavation | 14d | 2026-09-24 | 2026-10-10 | A63920, A58910 | 44d |
| A92500 |  | Duct Jointing & Laying | 14d | 2026-10-11 | 2026-10-26 | A92490 | 44d |
| A92510 |  | Road Crossing Encasement | 14d | 2026-10-27 | 2026-11-11 | A92500 | 44d |
| A92520 |  | Manhole Civil Works | 14d | 2027-01-02 | 2027-01-17 | A92510, A10250, A11110 | 1d |
| A92530 |  | Backfilling & Compaction | 14d | 2027-01-18 | 2027-02-02 | A92520 | 1d |
|  | RON2 | **ROUND ABOUT 2** |  | 2026-09-24 | 2027-02-02 |  |  |
| A92540 |  | Excavation | 14d | 2026-09-24 | 2026-10-10 | A63920, A58910 | 44d |
| A92550 |  | Duct Jointing & Laying | 14d | 2026-10-11 | 2026-10-26 | A92540 | 44d |
| A92560 |  | Road Crossing Encasement | 14d | 2026-10-27 | 2026-11-11 | A92550 | 44d |
| A92570 |  | Manhole Civil Works | 14d | 2027-01-02 | 2027-01-17 | A92560, A10250, A11110 | 1d |
| A92580 |  | Backfilling & Compaction | 14d | 2027-01-18 | 2027-02-02 | A92570 | 1d |
|  | EXR | **EX ROAD** |  | 2026-09-24 | 2027-02-02 |  |  |
| A92590 |  | Excavation | 14d | 2026-09-24 | 2026-10-10 | A63920, A58910 | 44d |
| A92600 |  | Duct Jointing & Laying | 14d | 2026-10-11 | 2026-10-26 | A92590 | 44d |
| A92610 |  | Road Crossing Encasement | 14d | 2026-10-27 | 2026-11-11 | A92600 | 44d |
| A92620 |  | Manhole Civil Works | 14d | 2027-01-02 | 2027-01-17 | A92610, A10250, A11110 | 1d |
| A92630 |  | Backfilling & Compaction | 14d | 2027-01-18 | 2027-02-02 | A92620 | 1d |
|  | RW | **ROADS WORK** |  | 2026-07-28 | 2027-07-19 |  |  |
|  | R18 | **Road 18** |  | 2026-07-28 | 2027-06-07 |  |  |
|  | AGG | **Aggregate Base Course** |  | 2026-07-28 | 2026-07-30 |  |  |
| A62750 |  | Aggregate base course | 3d | 2026-07-28 | 2026-07-30 | A62740, A86340 | 0d |
|  | 2 | **Bituminous Construction** |  | 2026-08-01 | 2026-08-03 |  |  |
| A62760 |  | Bituminous base course (Grading I - Class A) | 3d | 2026-08-01 | 2026-08-03 | A62750 | 51d |
|  | 3 | **Asphalt Wearing Course** |  | 2027-02-28 | 2027-03-02 |  |  |
| A62770 |  | Bituminous concrete wearing course | 3d | 2027-02-28 | 2027-03-02 | A62760, A56680 SS, A4825 | 1d |
|  | 4 | **Precast Concrete Curb** |  | 2027-05-26 | 2027-05-29 |  |  |
| A62780 |  | Concrete curb, Type (K1A) | 1d | 2027-05-26 | 2027-05-26 | A62750, A62770, A10270 | 128d |
| A62790 |  | Concrete curb, Type (K1B) | 1d | 2027-05-27 | 2027-05-27 | A62780, A10270 | 128d |
| A62800 |  | Concrete curb, Type (K2) | 1d | 2027-05-29 | 2027-05-29 | A62790, A10270 | 128d |
|  | 5 | **Pavement Markings** |  | 2027-05-30 | 2027-05-31 |  |  |
| A62810 |  | Retroreflective Thermoplastic White Traffic lines | 1d | 2027-05-30 | 2027-05-30 | A62800, A62770 | 128d |
| A62820 |  | Retroreflective Thermoplastic Yellow Traffic lines | 1d | 2027-05-31 | 2027-05-31 | A62810 | 128d |
|  | 6 | **Traffic Signage** |  | 2027-06-01 | 2027-06-07 |  |  |

| ID | WBS | Task | Duration | Start | Finish | Predecessors | Total float |
| --- | --- | --- | --- | --- | --- | --- | --- |
| A62830 |  | Traffic signs, ground mounted, 1 Sheet Alumenium, (breakaway) Single post | 1d | 2027-06-01 | 2027-06-01 | A62820 | 128d |
| A62840 |  | Traffic signs, ground mounted, 2 Sheet Alumenium, (breakaway) Single post | 1d | 2027-06-02 | 2027-06-02 | A62830 | 128d |
| A62850 |  | Traffic signs, ground mounted, Sheet Alumenium, (breakaway) Double post | 1d | 2027-06-03 | 2027-06-03 | A62840 | 128d |
| A62860 |  | Retroreflective raised pavement markers (Type A) | 1d | 2027-06-05 | 2027-06-05 | A62850 | 140d |
| A62870 |  | Ceramic raised pavement markers | 1d | 2027-06-06 | 2027-06-06 | A62860 | 140d |
| A62880 |  | Solar powered lighting cateyes pavement markers | 1d | 2027-06-07 | 2027-06-07 | A62870 | 153d |
|  | R19 | **Road 19** |  | 2026-08-01 | 2027-06-07 |  |  |
|  | AGG | **Aggregate Base Course** |  | 2026-08-01 | 2026-08-04 |  |  |
| A64650 |  | Aggregate base course | 4d | 2026-08-01 | 2026-08-04 | A62750 SS, A64370, A62750 | 0d |
|  | 2 | **Bituminous Construction** |  | 2026-08-05 | 2026-08-09 |  |  |
| A64660 |  | Bituminous base course (Grading I - Class A) | 4d | 2026-08-05 | 2026-08-09 | A64650 | 46d |
|  | 3 | **Asphalt Wearing Course** |  | 2027-03-03 | 2027-03-07 |  |  |
| A64670 |  | Bituminous concrete wearing course | 4d | 2027-03-03 | 2027-03-07 | A64660, A62770 | 1d |
|  | 4 | **Precast Concrete Curb** |  | 2027-05-26 | 2027-05-29 |  |  |
| A64680 |  | Concrete curb, Type (K1A) | 1d | 2027-05-26 | 2027-05-26 | A64650, A64670, A10270 | 128d |
| A64690 |  | Concrete curb, Type (K1B) | 1d | 2027-05-27 | 2027-05-27 | A64680, A10270 | 128d |
| A64700 |  | Concrete curb, Type (K2) | 1d | 2027-05-29 | 2027-05-29 | A64690, A10270 | 128d |
|  | 5 | **Pavement Markings** |  | 2027-05-30 | 2027-05-31 |  |  |
| A64710 |  | Retroreflective Thermoplastic White Traffic lines | 1d | 2027-05-30 | 2027-05-30 | A64700, A64670 | 128d |
| A64720 |  | Retroreflective Thermoplastic Yellow Traffic lines | 1d | 2027-05-31 | 2027-05-31 | A64710 | 128d |
|  | 6 | **Traffic Signage** |  | 2027-06-01 | 2027-06-07 |  |  |
| A64730 |  | Traffic signs, ground mounted, 1 Sheet Alumenium, (breakaway) Single post | 1d | 2027-06-01 | 2027-06-01 | A64720 | 128d |
| A64740 |  | Traffic signs, ground mounted, 2 Sheet Alumenium, (breakaway) Single post | 1d | 2027-06-02 | 2027-06-02 | A64730 | 128d |
| A64750 |  | Traffic signs, ground mounted, Sheet Alumenium, (breakaway) Double post | 1d | 2027-06-03 | 2027-06-03 | A64740 | 128d |
| A64760 |  | Retroreflective raised pavement markers (Type A) | 1d | 2027-06-05 | 2027-06-05 | A64750 | 140d |
| A64770 |  | Ceramic raised pavement markers | 1d | 2027-06-06 | 2027-06-06 | A64760 | 140d |
| A64780 |  | Solar powered lighting cateyes pavement markers | 1d | 2027-06-07 | 2027-06-07 | A64770 | 153d |
|  | R20 | **Road 20** |  | 2026-08-05 | 2027-06-09 |  |  |
|  | AGG | **Aggregate Base Course** |  | 2026-08-05 | 2026-08-08 |  |  |
| A64790 |  | Aggregate base course | 3d | 2026-08-05 | 2026-08-08 | A64650 SS, A64400, A64650 | 0d |
|  | 2 | **Bituminous Construction** |  | 2026-08-09 | 2026-08-09 |  |  |
| A64800 |  | Bituminous base course (Grading I - Class A) | 1d | 2026-08-09 | 2026-08-09 | A64790 | 46d |
|  | 3 | **Asphalt Wearing Course** |  | 2027-03-08 | 2027-03-13 |  |  |
| A64810 |  | Bituminous concrete wearing course | 5d | 2027-03-08 | 2027-03-13 | A64800, A64670 | 1d |
|  | 4 | **Precast Concrete Curb** |  | 2027-05-26 | 2027-05-30 |  |  |
| A64820 |  | Concrete curb, Type (K1A) | 1d | 2027-05-26 | 2027-05-26 | A64790, A64810, A10270 | 126d |
| A64830 |  | Concrete curb, Type (K1B) | 1d | 2027-05-27 | 2027-05-27 | A64820, A10270 | 126d |
| A64840 |  | Concrete curb, Type (K2) | 2d | 2027-05-29 | 2027-05-30 | A64830, A10270 | 126d |
|  | 5 | **Pavement Markings** |  | 2027-05-31 | 2027-06-01 |  |  |
| A64850 |  | Retroreflective Thermoplastic White Traffic lines | 1d | 2027-05-31 | 2027-05-31 | A64840, A64810 | 126d |
| A64860 |  | Retroreflective Thermoplastic Yellow Traffic lines | 1d | 2027-06-01 | 2027-06-01 | A64850 | 126d |
|  | 6 | **Traffic Signage** |  | 2027-06-02 | 2027-06-09 |  |  |
| A64870 |  | Traffic signs, ground mounted, 1 Sheet Alumenium, (breakaway) Single post | 1d | 2027-06-02 | 2027-06-02 | A64860 | 126d |
| A64880 |  | Traffic signs, ground mounted, 2 Sheet Alumenium, (breakaway) Single post | 1d | 2027-06-03 | 2027-06-03 | A64870 | 126d |
| A64890 |  | Traffic signs, ground mounted, Sheet Alumenium, (breakaway) Double post | 2d | 2027-06-05 | 2027-06-06 | A64880 | 126d |
| A64900 |  | Retroreflective raised pavement markers (Type A) | 1d | 2027-06-07 | 2027-06-07 | A64890 | 138d |
| A64910 |  | Ceramic raised pavement markers | 1d | 2027-06-08 | 2027-06-08 | A64900 | 138d |
| A64920 |  | Solar powered lighting cateyes pavement markers | 1d | 2027-06-09 | 2027-06-09 | A64910 | 151d |
|  | R21 | **Road 21** |  | 2026-08-09 | 2027-06-09 |  |  |
|  | AGG | **Aggregate Base Course** |  | 2026-08-09 | 2026-08-11 |  |  |
| A64930 |  | Aggregate base course | 3d | 2026-08-09 | 2026-08-11 | A64790 SS, A64430, A64790 | 0d |
|  | 2 | **Bituminous Construction** |  | 2026-08-12 | 2026-08-12 |  |  |
| A64940 |  | Bituminous base course (Grading I - Class A) | 1d | 2026-08-12 | 2026-08-12 | A64930 | 43d |
|  | 3 | **Asphalt Wearing Course** |  | 2027-03-14 | 2027-03-22 |  |  |
| A64950 |  | Bituminous concrete wearing course | 8d | 2027-03-14 | 2027-03-22 | A64940, A64810 | 1d |
|  | 4 | **Precast Concrete Curb** |  | 2027-05-26 | 2027-05-30 |  |  |
| A64960 |  | Concrete curb, Type (K1A) | 1d | 2027-05-26 | 2027-05-26 | A64930, A64950, A10270 | 126d |
| A64970 |  | Concrete curb, Type (K1B) | 1d | 2027-05-27 | 2027-05-27 | A64960, A10270 | 126d |
| A64980 |  | Concrete curb, Type (K2) | 2d | 2027-05-29 | 2027-05-30 | A64970, A10270 | 126d |
|  | 5 | **Pavement Markings** |  | 2027-05-31 | 2027-06-01 |  |  |
| A64990 |  | Retroreflective Thermoplastic White Traffic lines | 1d | 2027-05-31 | 2027-05-31 | A64980, A64950 | 126d |
| A65000 |  | Retroreflective Thermoplastic Yellow Traffic lines | 1d | 2027-06-01 | 2027-06-01 | A64990 | 126d |
|  | 6 | **Traffic Signage** |  | 2027-06-02 | 2027-06-09 |  |  |
| A65010 |  | Traffic signs, ground mounted, 1 Sheet Alumenium, (breakaway) Single post | 1d | 2027-06-02 | 2027-06-02 | A65000 | 126d |
| A65020 |  | Traffic signs, ground mounted, 2 Sheet Alumenium, (breakaway) Single post | 1d | 2027-06-03 | 2027-06-03 | A65010 | 126d |
| A62890 |  | Traffic signs, ground mounted, Sheet Alumenium, (breakaway) Double post | 2d | 2027-06-05 | 2027-06-06 | A65020 | 126d |
| A62900 |  | Retroreflective raised pavement markers (Type A) | 1d | 2027-06-07 | 2027-06-07 | A62890 | 138d |
| A62910 |  | Ceramic raised pavement markers | 1d | 2027-06-08 | 2027-06-08 | A62900 | 138d |
| A62920 |  | Solar powered lighting cateyes pavement markers | 1d | 2027-06-09 | 2027-06-09 | A62910 | 151d |
|  | R22 | **Road 22** |  | 2026-08-12 | 2027-06-07 |  |  |

| ID | WBS | Task | Duration | Start | Finish | Predecessors | Total float |
| --- | --- | --- | --- | --- | --- | --- | --- |
|  | AGG | **Aggregate Base Course** |  | 2026-08-12 | 2026-08-15 |  |  |
| A62930 |  | Aggregate base course | 3d | 2026-08-12 | 2026-08-15 | A64930, A64460, A64930 FF | 0d |
|  | 2 | **Bituminous Construction** |  | 2026-08-16 | 2026-08-16 |  |  |
| A62940 |  | Bituminous base course (Grading I - Class A) | 1d | 2026-08-16 | 2026-08-16 | A62930 | 40d |
|  | 3 | **Asphalt Wearing Course** |  | 2027-03-23 | 2027-03-25 |  |  |
| A62950 |  | Bituminous concrete wearing course | 3d | 2027-03-23 | 2027-03-25 | A62940, A64950 | 1d |
|  | 4 | **Precast Concrete Curb** |  | 2027-05-26 | 2027-05-29 |  |  |
| A62960 |  | Concrete curb, Type (K1A) | 1d | 2027-05-26 | 2027-05-26 | A62930, A62950, A10270 | 128d |
| A62970 |  | Concrete curb, Type (K1B) | 1d | 2027-05-27 | 2027-05-27 | A62960, A10270 | 128d |
| A62980 |  | Concrete curb, Type (K2) | 1d | 2027-05-29 | 2027-05-29 | A62970, A10270 | 128d |
|  | 5 | **Pavement Markings** |  | 2027-05-30 | 2027-05-31 |  |  |
| A62990 |  | Retroreflective Thermoplastic White Traffic lines | 1d | 2027-05-30 | 2027-05-30 | A62980, A62950 | 128d |
| A63000 |  | Retroreflective Thermoplastic Yellow Traffic lines | 1d | 2027-05-31 | 2027-05-31 | A62990 | 128d |
|  | 6 | **Traffic Signage** |  | 2027-06-01 | 2027-06-07 |  |  |
| A63010 |  | Traffic signs, ground mounted, 1 Sheet Alumenium, (breakaway) Single post | 1d | 2027-06-01 | 2027-06-01 | A63000 | 128d |
| A63020 |  | Traffic signs, ground mounted, 2 Sheet Alumenium, (breakaway) Single post | 1d | 2027-06-02 | 2027-06-02 | A63010 | 128d |
| A63030 |  | Traffic signs, ground mounted, Sheet Alumenium, (breakaway) Double post | 1d | 2027-06-03 | 2027-06-03 | A63020 | 128d |
| A63040 |  | Retroreflective raised pavement markers (Type A) | 1d | 2027-06-05 | 2027-06-05 | A63030 | 140d |
| A63050 |  | Ceramic raised pavement markers | 1d | 2027-06-06 | 2027-06-06 | A63040 | 140d |
| A63060 |  | Solar powered lighting cateyes pavement markers | 1d | 2027-06-07 | 2027-06-07 | A63050 | 153d |
|  | R23 | **Road 23** |  | 2026-08-16 | 2027-06-07 |  |  |
|  | AGG | **Aggregate Base Course** |  | 2026-08-16 | 2026-08-18 |  |  |
| A63070 |  | Aggregate base course | 3d | 2026-08-16 | 2026-08-18 | A62930 SS, A64490, A62930 | 0d |
|  | 2 | **Bituminous Construction** |  | 2026-08-19 | 2026-08-19 |  |  |
| A63080 |  | Bituminous base course (Grading I - Class A) | 1d | 2026-08-19 | 2026-08-19 | A63070 | 37d |
|  | 3 | **Asphalt Wearing Course** |  | 2027-03-27 | 2027-03-29 |  |  |
| A63090 |  | Bituminous concrete wearing course | 3d | 2027-03-27 | 2027-03-29 | A63080, A62950 | 1d |
|  | 4 | **Precast Concrete Curb** |  | 2027-05-26 | 2027-05-29 |  |  |
| A63100 |  | Concrete curb, Type (K1A) | 1d | 2027-05-26 | 2027-05-26 | A63070, A63090, A10270 | 128d |
| A63110 |  | Concrete curb, Type (K1B) | 1d | 2027-05-27 | 2027-05-27 | A63100, A10270 | 128d |
| A63120 |  | Concrete curb, Type (K2) | 1d | 2027-05-29 | 2027-05-29 | A63110, A10270 | 128d |
|  | 5 | **Pavement Markings** |  | 2027-05-30 | 2027-05-31 |  |  |
| A63130 |  | Retroreflective Thermoplastic White Traffic lines | 1d | 2027-05-30 | 2027-05-30 | A63120, A63090 | 128d |
| A63140 |  | Retroreflective Thermoplastic Yellow Traffic lines | 1d | 2027-05-31 | 2027-05-31 | A63130 | 128d |
|  | 6 | **Traffic Signage** |  | 2027-06-01 | 2027-06-07 |  |  |
| A63150 |  | Traffic signs, ground mounted, 1 Sheet Alumenium, (breakaway) Single post | 1d | 2027-06-01 | 2027-06-01 | A63140 | 128d |
| A63160 |  | Traffic signs, ground mounted, 2 Sheet Alumenium, (breakaway) Single post | 1d | 2027-06-02 | 2027-06-02 | A63150 | 128d |
| A63170 |  | Traffic signs, ground mounted, Sheet Alumenium, (breakaway) Double post | 1d | 2027-06-03 | 2027-06-03 | A63160 | 128d |
| A63180 |  | Retroreflective raised pavement markers (Type A) | 1d | 2027-06-05 | 2027-06-05 | A63170 | 140d |
| A63190 |  | Ceramic raised pavement markers | 1d | 2027-06-06 | 2027-06-06 | A63180 | 140d |
| A63200 |  | Solar powered lighting cateyes pavement markers | 1d | 2027-06-07 | 2027-06-07 | A63190 | 153d |
|  | R24 | **Road 24** |  | 2026-08-19 | 2027-06-08 |  |  |
|  | AGG | **Aggregate Base Course** |  | 2026-08-19 | 2026-08-22 |  |  |
| A63210 |  | Aggregate base course | 3d | 2026-08-19 | 2026-08-22 | A63070 SS, A64520, A63070 | 0d |
|  | 2 | **Bituminous Construction** |  | 2026-08-23 | 2026-08-23 |  |  |
| A63220 |  | Bituminous base course (Grading I - Class A) | 1d | 2026-08-23 | 2026-08-23 | A63210 | 34d |
|  | 3 | **Asphalt Wearing Course** |  | 2027-03-30 | 2027-04-04 |  |  |
| A63230 |  | Bituminous concrete wearing course | 5d | 2027-03-30 | 2027-04-04 | A63220, A63090 | 1d |
|  | 4 | **Precast Concrete Curb** |  | 2027-05-26 | 2027-05-30 |  |  |
| A63240 |  | Concrete curb, Type (K1A) | 1d | 2027-05-26 | 2027-05-26 | A63210, A63230, A10270 | 127d |
| A63250 |  | Concrete curb, Type (K1B) | 1d | 2027-05-27 | 2027-05-27 | A63240, A10270 | 127d |
| A63260 |  | Concrete curb, Type (K2) | 2d | 2027-05-29 | 2027-05-30 | A63250, A10270 | 127d |
|  | 5 | **Pavement Markings** |  | 2027-05-31 | 2027-06-01 |  |  |
| A63270 |  | Retroreflective Thermoplastic White Traffic lines | 1d | 2027-05-31 | 2027-05-31 | A63260, A63230 | 127d |
| A63280 |  | Retroreflective Thermoplastic Yellow Traffic lines | 1d | 2027-06-01 | 2027-06-01 | A63270 | 127d |
|  | 6 | **Traffic Signage** |  | 2027-06-02 | 2027-06-08 |  |  |
| A63290 |  | Traffic signs, ground mounted, 1 Sheet Alumenium, (breakaway) Single post | 1d | 2027-06-02 | 2027-06-02 | A63280 | 127d |
| A63300 |  | Traffic signs, ground mounted, 2 Sheet Alumenium, (breakaway) Single post | 1d | 2027-06-03 | 2027-06-03 | A63290 | 127d |
| A63310 |  | Traffic signs, ground mounted, Sheet Alumenium, (breakaway) Double post | 1d | 2027-06-05 | 2027-06-05 | A63300 | 127d |
| A63320 |  | Retroreflective raised pavement markers (Type A) | 1d | 2027-06-06 | 2027-06-06 | A63310 | 139d |
| A63330 |  | Ceramic raised pavement markers | 1d | 2027-06-07 | 2027-06-07 | A63320 | 139d |
| A63340 |  | Solar powered lighting cateyes pavement markers | 1d | 2027-06-08 | 2027-06-08 | A63330 | 152d |
|  | R25 | **Road 25** |  | 2026-08-23 | 2027-06-09 |  |  |
|  | AGG | **Aggregate Base Course** |  | 2026-08-23 | 2026-08-25 |  |  |
| A63350 |  | Aggregate base course | 3d | 2026-08-23 | 2026-08-25 | A63210, A64550, A63210 FF | 0d |
|  | 2 | **Bituminous Construction** |  | 2026-08-26 | 2026-08-26 |  |  |
| A63360 |  | Bituminous base course (Grading I - Class A) | 1d | 2026-08-26 | 2026-08-26 | A63350 | 31d |
|  | 3 | **Asphalt Wearing Course** |  | 2027-04-05 | 2027-04-11 |  |  |
| A63370 |  | Bituminous concrete wearing course | 6d | 2027-04-05 | 2027-04-11 | A63360, A63230 | 1d |
|  | 4 | **Precast Concrete Curb** |  | 2027-05-26 | 2027-05-30 |  |  |

| ID | WBS | Task | Duration | Start | Finish | Predecessors | Total float |
| --- | --- | --- | --- | --- | --- | --- | --- |
| A63380 |  | Concrete curb, Type (K1A) | 1d | 2027-05-26 | 2027-05-26 | A63350, A63370, A10270 | 137d |
| A63390 |  | Concrete curb, Type (K1B) | 1d | 2027-05-27 | 2027-05-27 | A63380, A10270 | 137d |
| A63400 |  | Concrete curb, Type (K2) | 2d | 2027-05-29 | 2027-05-30 | A63390, A10270 | 137d |
|  | 5 | **Pavement Markings** |  | 2027-05-31 | 2027-06-01 |  |  |
| A63410 |  | Retroreflective Thermoplastic White Traffic lines | 1d | 2027-05-31 | 2027-05-31 | A63400, A63370 | 137d |
| A63420 |  | Retroreflective Thermoplastic Yellow Traffic lines | 1d | 2027-06-01 | 2027-06-01 | A63410 | 137d |
|  | 6 | **Traffic Signage** |  | 2027-06-02 | 2027-06-09 |  |  |
| A63430 |  | Traffic signs, ground mounted, 1 Sheet Alumenium, (breakaway) Single post | 1d | 2027-06-02 | 2027-06-02 | A63420 | 137d |
| A63440 |  | Traffic signs, ground mounted, 2 Sheet Alumenium, (breakaway) Single post | 1d | 2027-06-03 | 2027-06-03 | A63430 | 137d |
| A63450 |  | Traffic signs, ground mounted, Sheet Alumenium, (breakaway) Double post | 2d | 2027-06-05 | 2027-06-06 | A63440 | 137d |
| A63460 |  | Retroreflective raised pavement markers (Type A) | 1d | 2027-06-07 | 2027-06-07 | A63450 | 149d |
| A63470 |  | Ceramic raised pavement markers | 1d | 2027-06-08 | 2027-06-08 | A63460 | 149d |
| A63480 |  | Solar powered lighting cateyes pavement markers | 1d | 2027-06-09 | 2027-06-09 | A63470 | 151d |
|  | R251 | **Road 26** |  | 2026-08-26 | 2027-06-06 |  |  |
|  | AGG | **Aggregate Base Course** |  | 2026-08-26 | 2026-08-29 |  |  |
| A63910 |  | Aggregate base course | 3d | 2026-08-26 | 2026-08-29 | A63350, A66650, A63350 FF | 0d |
|  | 2 | **Bituminous Construction** |  | 2026-08-30 | 2026-09-09 |  |  |
| A63920 |  | Bituminous base course (Grading I - Class A) | 10d | 2026-08-30 | 2026-09-09 | A63910 | 19d |
|  | 3 | **Asphalt Wearing Course** |  | 2027-04-12 | 2027-04-28 |  |  |
| A63930 |  | Bituminous concrete wearing course | 15d | 2027-04-12 | 2027-04-28 | A63920, A63370 | 1d |
|  | 4 | **Precast Concrete Curb** |  | 2027-05-26 | 2027-05-30 |  |  |
| A63940 |  | Concrete curb, Type (K1A) | 4d | 2027-05-26 | 2027-05-30 | A63910, A63930, A10270 | 126d |
| A63950 |  | Concrete curb, Type (K1B) | 4d | 2027-05-26 | 2027-05-30 | A63940 SS, A63940 FF, A10270 | 126d |
| A63960 |  | Concrete curb, Type (K2) | 4d | 2027-05-26 | 2027-05-30 | A63950 SS, A63950 FF, A10270 | 126d |
|  | 5 | **Pavement Markings** |  | 2027-05-31 | 2027-06-03 |  |  |
| A63970 |  | Retroreflective Thermoplastic White Traffic lines | 2d | 2027-05-31 | 2027-06-01 | A63960, A63930 | 126d |
| A63980 |  | Retroreflective Thermoplastic Yellow Traffic lines | 2d | 2027-06-02 | 2027-06-03 | A63970 | 126d |
|  | 6 | **Traffic Signage** |  | 2027-06-05 | 2027-06-06 |  |  |
| A63990 |  | Traffic signs, ground mounted, 1 Sheet Alumenium, (breakaway) Single post | 2d | 2027-06-05 | 2027-06-06 | A63980 | 154d |
| A64000 |  | Traffic signs, ground mounted, 2 Sheet Alumenium, (breakaway) Single post | 2d | 2027-06-05 | 2027-06-06 | A63980 | 154d |
| A64010 |  | Traffic signs, ground mounted, Sheet Alumenium, (breakaway) Double post | 2d | 2027-06-05 | 2027-06-06 | A63980 | 126d |
| A64020 |  | Retroreflective raised pavement markers (Type A) | 2d | 2027-06-05 | 2027-06-06 | A63980 | 154d |
| A64030 |  | Ceramic raised pavement markers | 2d | 2027-06-05 | 2027-06-06 | A63980 | 140d |
| A64040 |  | Solar powered lighting cateyes pavement markers | 2d | 2027-06-05 | 2027-06-06 | A63980 | 154d |
|  | R2511 | **Road 27** |  | 2026-08-30 | 2027-06-09 |  |  |
|  | AGG | **Aggregate Base Course** |  | 2026-08-30 | 2026-09-01 |  |  |
| A64050 |  | Aggregate base course | 3d | 2026-08-30 | 2026-09-01 | A63910, A66680, A63910 FF | 0d |
|  | 2 | **Bituminous Construction** |  | 2026-09-02 | 2026-09-02 |  |  |
| A64060 |  | Bituminous base course (Grading I - Class A) | 1d | 2026-09-02 | 2026-09-02 | A64050 | 25d |
|  | 3 | **Asphalt Wearing Course** |  | 2027-04-29 | 2027-05-04 |  |  |
| A64070 |  | Bituminous concrete wearing course | 5d | 2027-04-29 | 2027-05-04 | A64060, A63930 | 1d |
|  | 4 | **Precast Concrete Curb** |  | 2027-05-26 | 2027-05-30 |  |  |
| A64080 |  | Concrete curb, Type (K1A) | 1d | 2027-05-26 | 2027-05-26 | A64050, A64070, A10270 | 126d |
| A64090 |  | Concrete curb, Type (K1B) | 1d | 2027-05-27 | 2027-05-27 | A64080, A10270 | 126d |
| A64100 |  | Concrete curb, Type (K2) | 2d | 2027-05-29 | 2027-05-30 | A64090, A10270 | 126d |
|  | 5 | **Pavement Markings** |  | 2027-05-31 | 2027-06-01 |  |  |
| A64110 |  | Retroreflective Thermoplastic White Traffic lines | 1d | 2027-05-31 | 2027-05-31 | A64100, A64070 | 126d |
| A64120 |  | Retroreflective Thermoplastic Yellow Traffic lines | 1d | 2027-06-01 | 2027-06-01 | A64110 | 126d |
|  | 6 | **Traffic Signage** |  | 2027-06-02 | 2027-06-09 |  |  |
| A64130 |  | Traffic signs, ground mounted, 1 Sheet Alumenium, (breakaway) Single post | 1d | 2027-06-02 | 2027-06-02 | A64120 | 126d |
| A64140 |  | Traffic signs, ground mounted, 2 Sheet Alumenium, (breakaway) Single post | 1d | 2027-06-03 | 2027-06-03 | A64130 | 126d |
| A64150 |  | Traffic signs, ground mounted, Sheet Alumenium, (breakaway) Double post | 2d | 2027-06-05 | 2027-06-06 | A64140 | 126d |
| A64160 |  | Retroreflective raised pavement markers (Type A) | 1d | 2027-06-07 | 2027-06-07 | A64150 | 138d |
| A64170 |  | Ceramic raised pavement markers | 1d | 2027-06-08 | 2027-06-08 | A64160 | 138d |
| A64180 |  | Solar powered lighting cateyes pavement markers | 1d | 2027-06-09 | 2027-06-09 | A64170 | 151d |
|  | CO2 | **Collector 2** |  | 2026-09-02 | 2027-06-29 |  |  |
|  | AGG | **Aggregate Base Course** |  | 2026-09-02 | 2026-09-06 |  |  |
| A63490 |  | Aggregate base course | 4d | 2026-09-02 | 2026-09-06 | A64650 SS, A64580, A64050 | 0d |
|  | 2 | **Bituminous Construction** |  | 2026-09-07 | 2026-10-01 |  |  |
| A63500 |  | Bituminous base course (Grading I - Class A) | 22d | 2026-09-07 | 2026-10-01 | A63490 | 0d |
|  | 3 | **Asphalt Wearing Course** |  | 2027-05-05 | 2027-06-08 |  |  |
| A63510 |  | Bituminous concrete wearing course | 30d | 2027-05-05 | 2027-06-08 | A63500, A64070 | 1d |
|  | 4 | **Precast Concrete Curb** |  | 2027-06-09 | 2027-06-20 |  |  |
| A63520 |  | Concrete curb, Type (K1A) | 3d | 2027-06-09 | 2027-06-12 | A63490, A63510, A10270 | 5d |
| A63530 |  | Concrete curb, Type (K1B) | 3d | 2027-06-13 | 2027-06-15 | A63520, A10270 | 5d |
| A63540 |  | Concrete curb, Type (K2) | 4d | 2027-06-16 | 2027-06-20 | A63530, A10270 | 5d |
|  | 5 | **Pavement Markings** |  | 2027-06-21 | 2027-06-22 |  |  |
| A63550 |  | Retroreflective Thermoplastic White Traffic lines | 2d | 2027-06-21 | 2027-06-22 | A63540, A63510 | 5d |
| A63560 |  | Retroreflective Thermoplastic Yellow Traffic lines | 2d | 2027-06-21 | 2027-06-22 | A63550 SS, A63550 FF | 5d |
|  | 6 | **Traffic Signage** |  | 2027-06-21 | 2027-06-29 |  |  |

| ID | WBS | Task | Duration | Start | Finish | Predecessors | Total float |
| --- | --- | --- | --- | --- | --- | --- | --- |
| A63570 |  | Traffic signs, ground mounted, 1 Sheet Alumenium, (breakaway) Single post | 2d | 2027-06-21 | 2027-06-22 | A63560 SS, A63560 FF | 5d |
| A63580 |  | Traffic signs, ground mounted, 2 Sheet Alumenium, (breakaway) Single post | 2d | 2027-06-21 | 2027-06-22 | A63570 SS, A63570 FF | 5d |
| A63590 |  | Traffic signs, ground mounted, Sheet Alumenium, (breakaway) Double post | 2d | 2027-06-21 | 2027-06-22 | A63580 SS, A63580 FF | 5d |
| A63600 |  | Retroreflective raised pavement markers (Type A) | 2d | 2027-06-23 | 2027-06-24 | A63590 | 5d |
| A63610 |  | Ceramic raised pavement markers | 2d | 2027-06-26 | 2027-06-27 | A63600 | 5d |
| A63620 |  | Solar powered lighting cateyes pavement markers | 2d | 2027-06-28 | 2027-06-29 | A63610 | 5d |
|  | AR1 | **Arterial 1** |  | 2026-08-09 | 2027-07-15 |  |  |
|  | AGG | **Aggregate Base Course** |  | 2026-08-09 | 2026-08-13 |  |  |
| A63630 |  | Aggregate base course | 5d | 2026-08-09 | 2026-08-13 | A64790, A64610 | 38d |
|  | 2 | **Bituminous Construction** |  | 2026-08-15 | 2026-08-17 |  |  |
| A63640 |  | Bituminous base course (Grading I - Class A) | 3d | 2026-08-15 | 2026-08-17 | A63630 | 39d |
|  | 3 | **Asphalt Wearing Course** |  | 2027-06-09 | 2027-06-22 |  |  |
| A63650 |  | Bituminous concrete wearing course | 12d | 2027-06-09 | 2027-06-22 | A63640 SS, A63640 FF, A63510 | 1d |
|  | 4 | **Precast Concrete Curb** |  | 2027-06-23 | 2027-06-27 |  |  |
| A63660 |  | Concrete curb, Type (K1A) | 3d | 2027-06-23 | 2027-06-26 | A63630, A63650, A10270 | 1d |
| A63670 |  | Concrete curb, Type (K1B) | 3d | 2027-06-23 | 2027-06-26 | A63660 SS, A63660 FF, A10270 | 1d |
| A63680 |  | Concrete curb, Type (K2) | 4d | 2027-06-23 | 2027-06-27 | A63670 SS, A63670 FF, A10270 | 1d |
|  | 5 | **Pavement Markings** |  | 2027-06-28 | 2027-06-29 |  |  |
| A63690 |  | Retroreflective Thermoplastic White Traffic lines | 2d | 2027-06-28 | 2027-06-29 | A63680, A63650 | 1d |
| A63700 |  | Retroreflective Thermoplastic Yellow Traffic lines | 2d | 2027-06-28 | 2027-06-29 | A63690 SS, A63690 FF | 1d |
|  | 6 | **Traffic Signage** |  | 2027-06-30 | 2027-07-15 |  |  |
| A63710 |  | Traffic signs, ground mounted, 1 Sheet Alumenium, (breakaway) Single post | 2d | 2027-06-30 | 2027-07-01 | A63700 | 1d |
| A63720 |  | Traffic signs, ground mounted, 2 Sheet Alumenium, (breakaway) Single post | 2d | 2027-06-30 | 2027-07-01 | A63710 SS, A63710 FF | 1d |
| A63730 |  | Traffic signs, ground mounted, Sheet Alumenium, (breakaway) Double post | 2d | 2027-07-03 | 2027-07-04 | A63720 | 1d |
| A63740 |  | Retroreflective raised pavement markers (Type A) | 4d | 2027-07-05 | 2027-07-08 | A63730 | 38d |
| A63750 |  | Ceramic raised pavement markers | 4d | 2027-07-10 | 2027-07-13 | A63740 | 38d |
| A63760 |  | Solar powered lighting cateyes pavement markers | 2d | 2027-07-14 | 2027-07-15 | A63750 | 120d |
|  | AR2 | **Arterial 2** |  | 2026-08-15 | 2027-07-19 |  |  |
|  | AGG | **Aggregate Base Course** |  | 2026-08-15 | 2026-08-17 |  |  |
| A63770 |  | Aggregate base course | 3d | 2026-08-15 | 2026-08-17 | A63630, A64640 | 38d |
|  | 2 | **Bituminous Construction** |  | 2026-08-18 | 2026-08-18 |  |  |
| A63780 |  | Bituminous base course (Grading I - Class A) | 1d | 2026-08-18 | 2026-08-18 | A63770 | 38d |
|  | 3 | **Asphalt Wearing Course** |  | 2027-06-23 | 2027-06-29 |  |  |
| A63790 |  | Bituminous concrete wearing course | 6d | 2027-06-23 | 2027-06-29 | A63780, A63650 | 102d |
|  | 4 | **Precast Concrete Curb** |  | 2027-05-26 | 2027-06-30 |  |  |
| A63800 |  | Concrete curb, Type (K1A) | 1d | 2027-05-26 | 2027-05-26 | A63770, A10270 | 130d |
| A63810 |  | Concrete curb, Type (K1B) | 1d | 2027-05-27 | 2027-05-27 | A63800, A10270 | 130d |
| A63820 |  | Concrete curb, Type (K2) | 1d | 2027-06-30 | 2027-06-30 | A63810, A63790, A10270 | 102d |
|  | 5 | **Pavement Markings** |  | 2027-07-01 | 2027-07-05 |  |  |
| A63830 |  | Retroreflective Thermoplastic White Traffic lines | 2d | 2027-07-01 | 2027-07-03 | A63820, A63790 | 102d |
| A63840 |  | Retroreflective Thermoplastic Yellow Traffic lines | 2d | 2027-07-04 | 2027-07-05 | A63830 | 102d |
|  | 6 | **Traffic Signage** |  | 2027-07-06 | 2027-07-19 |  |  |
| A63850 |  | Traffic signs, ground mounted, 1 Sheet Alumenium, (breakaway) Single post | 2d | 2027-07-06 | 2027-07-07 | A63840 | 102d |
| A63860 |  | Traffic signs, ground mounted, 2 Sheet Alumenium, (breakaway) Single post | 2d | 2027-07-08 | 2027-07-10 | A63850 | 102d |
| A63870 |  | Traffic signs, ground mounted, Sheet Alumenium, (breakaway) Double post | 2d | 2027-07-11 | 2027-07-12 | A63860 | 102d |
| A63880 |  | Retroreflective raised pavement markers (Type A) | 2d | 2027-07-13 | 2027-07-14 | A63870 | 105d |
| A63890 |  | Ceramic raised pavement markers | 2d | 2027-07-15 | 2027-07-17 | A63880 | 105d |
| A63900 |  | Solar powered lighting cateyes pavement markers | 2d | 2027-07-18 | 2027-07-19 | A63890 | 117d |
|  | LW | **LANDSCAPE WORK** |  | 2027-06-05 | 2027-12-01 |  |  |
|  | R18 | **Road 18** |  | 2027-06-05 | 2027-07-06 |  |  |
|  | 2 | **Trees/ Palms** |  | 2027-06-05 | 2027-06-20 |  |  |
| A64190 |  | Roadside tree - Cordia sebestena | 14d | 2027-06-05 | 2027-06-20 | A62850, A88420 | 142d |
| A64200 |  | Roadside tree - Parkinsonia aculeata | 14d | 2027-06-05 | 2027-06-20 | A62850, A88420 | 142d |
| A64210 |  | Roadside tree - Dalbergia sissoo | 14d | 2027-06-05 | 2027-06-20 | A62850, A88420 | 142d |
| A64220 |  | Roadside tree - Acacia stenophylla | 14d | 2027-06-05 | 2027-06-20 | A62850, A88420 | 142d |
| A64230 |  | Roadside tree - Hibiscus tiliaceus | 14d | 2027-06-05 | 2027-06-20 | A62850, A88420 | 142d |
| A64240 |  | Roadside tree - Azadirachla indica | 14d | 2027-06-05 | 2027-06-20 | A62850, A88420 | 128d |
|  | 3 | **Miscellaneous Landscaping Items** |  | 2027-06-07 | 2027-06-22 |  |  |
| A64250 |  | Install Precast concrete block paving for sidewalk, mixed grey colour | 14d | 2027-06-07 | 2027-06-22 | A62870, A88420 | 140d |
| A64260 |  | Install Precast concrete block paving for main intrsection, colour light grey | 14d | 2027-06-07 | 2027-06-22 | A62870, A88420 | 140d |
| A64270 |  | install Precast concrete block paving for main intrsection, colour mid grey | 14d | 2027-06-07 | 2027-06-22 | A62870, A88420 | 140d |
| A64280 |  | install Precast concrete block paving for main intrsection, colour dark grey | 14d | 2027-06-07 | 2027-06-22 | A62870, A88420 | 140d |
| A64290 |  | Gravel, mixed dark beige + medium beige + light beige | 14d | 2027-06-07 | 2027-06-22 | A62870, A88420 | 140d |
| A64300 |  | Concrete heel kerb | 14d | 2027-06-07 | 2027-06-22 | A62870, A88420 | 140d |
|  | 1 | **Ground Cover And Shrubs** |  | 2027-06-21 | 2027-07-06 |  |  |
| A64310 |  | Lantana montevidensis | 14d | 2027-06-21 | 2027-07-06 | A64240, A88420 | 128d |
| A64320 |  | Portulaca grandiflora | 14d | 2027-06-21 | 2027-07-06 | A64240, A88420 | 128d |
| A64330 |  | Dodonaea viscosa | 14d | 2027-06-21 | 2027-07-06 | A64240, A88420 | 128d |
| A64340 |  | Atriplex halimus | 14d | 2027-06-21 | 2027-07-06 | A64240, A88420 | 128d |
|  | R19 | **Road 19** |  | 2027-06-05 | 2027-07-06 |  |  |

| ID | WBS | Task | Duration | Start | Finish | Predecessors | Total float |
| --- | --- | --- | --- | --- | --- | --- | --- |
|  | 2 | **Trees/ Palms** |  | 2027-06-05 | 2027-06-20 |  |  |
| A65070 |  | Roadside tree - Cordia sebestena | 14d | 2027-06-05 | 2027-06-20 | A64750, A88420 | 142d |
| A65080 |  | Roadside tree - Parkinsonia aculeata | 14d | 2027-06-05 | 2027-06-20 | A64750, A88420 | 142d |
| A65090 |  | Roadside tree - Dalbergia sissoo | 14d | 2027-06-05 | 2027-06-20 | A64750, A88420 | 142d |
| A65100 |  | Roadside tree - Acacia stenophylla | 14d | 2027-06-05 | 2027-06-20 | A64750, A88420 | 142d |
| A65110 |  | Roadside tree - Hibiscus tiliaceus | 14d | 2027-06-05 | 2027-06-20 | A64750, A88420 | 142d |
| A65120 |  | Roadside tree - Azadirachla indica | 14d | 2027-06-05 | 2027-06-20 | A64750, A88420 | 128d |
|  | 3 | **Miscellaneous Landscaping Items** |  | 2027-06-07 | 2027-06-22 |  |  |
| A65130 |  | Install Precast concrete block paving for sidewalk, mixed grey colour | 14d | 2027-06-07 | 2027-06-22 | A64770, A88420 | 140d |
| A65140 |  | Install Precast concrete block paving for main intrsection, colour light grey | 14d | 2027-06-07 | 2027-06-22 | A64770, A88420 | 140d |
| A65150 |  | install Precast concrete block paving for main intrsection, colour mid grey | 14d | 2027-06-07 | 2027-06-22 | A64770, A88420 | 140d |
| A65160 |  | install Precast concrete block paving for main intrsection, colour dark grey | 14d | 2027-06-07 | 2027-06-22 | A64770, A88420 | 140d |
| A65170 |  | Gravel, mixed dark beige + medium beige + light beige | 14d | 2027-06-07 | 2027-06-22 | A64770, A88420 | 140d |
| A65180 |  | Concrete heel kerb | 14d | 2027-06-07 | 2027-06-22 | A64770, A88420 | 140d |
|  | 1 | **Ground Cover And Shrubs** |  | 2027-06-21 | 2027-07-06 |  |  |
| A65030 |  | Lantana montevidensis | 14d | 2027-06-21 | 2027-07-06 | A65120, A88420 | 128d |
| A65040 |  | Portulaca grandiflora | 14d | 2027-06-21 | 2027-07-06 | A65120, A88420 | 128d |
| A65050 |  | Dodonaea viscosa | 14d | 2027-06-21 | 2027-07-06 | A65120, A88420 | 128d |
| A65060 |  | Atriplex halimus | 14d | 2027-06-21 | 2027-07-06 | A65120, A88420 | 128d |
|  | R20 | **Road 20** |  | 2027-06-07 | 2027-07-08 |  |  |
|  | 2 | **Trees/ Palms** |  | 2027-06-07 | 2027-06-22 |  |  |
| A65230 |  | Roadside tree - Cordia sebestena | 14d | 2027-06-07 | 2027-06-22 | A64890, A88420 | 140d |
| A65240 |  | Roadside tree - Parkinsonia aculeata | 14d | 2027-06-07 | 2027-06-22 | A64890, A88420 | 140d |
| A65250 |  | Roadside tree - Dalbergia sissoo | 14d | 2027-06-07 | 2027-06-22 | A64890, A88420 | 140d |
| A65260 |  | Roadside tree - Acacia stenophylla | 14d | 2027-06-07 | 2027-06-22 | A64890, A88420 | 140d |
| A65270 |  | Roadside tree - Hibiscus tiliaceus | 14d | 2027-06-07 | 2027-06-22 | A64890, A88420 | 140d |
| A65280 |  | Roadside tree - Azadirachla indica | 14d | 2027-06-07 | 2027-06-22 | A64890, A88420 | 126d |
|  | 3 | **Miscellaneous Landscaping Items** |  | 2027-06-09 | 2027-06-24 |  |  |
| A65290 |  | Install Precast concrete block paving for sidewalk, mixed grey colour | 14d | 2027-06-09 | 2027-06-24 | A64910, A88420 | 138d |
| A65300 |  | Install Precast concrete block paving for main intrsection, colour light grey | 14d | 2027-06-09 | 2027-06-24 | A64910, A88420 | 138d |
| A65310 |  | install Precast concrete block paving for main intrsection, colour mid grey | 14d | 2027-06-09 | 2027-06-24 | A64910, A88420 | 138d |
| A65320 |  | install Precast concrete block paving for main intrsection, colour dark grey | 14d | 2027-06-09 | 2027-06-24 | A64910, A88420 | 138d |
| A65330 |  | Gravel, mixed dark beige + medium beige + light beige | 14d | 2027-06-09 | 2027-06-24 | A64910, A88420 | 138d |
| A65340 |  | Concrete heel kerb | 14d | 2027-06-09 | 2027-06-24 | A64910, A88420 | 138d |
|  | 1 | **Ground Cover And Shrubs** |  | 2027-06-23 | 2027-07-08 |  |  |
| A65190 |  | Lantana montevidensis | 14d | 2027-06-23 | 2027-07-08 | A65280, A88420 | 126d |
| A65200 |  | Portulaca grandiflora | 14d | 2027-06-23 | 2027-07-08 | A65280, A88420 | 126d |
| A65210 |  | Dodonaea viscosa | 14d | 2027-06-23 | 2027-07-08 | A65280, A88420 | 126d |
| A65220 |  | Atriplex halimus | 14d | 2027-06-23 | 2027-07-08 | A65280, A88420 | 126d |
|  | R21 | **Road 21** |  | 2027-06-07 | 2027-07-08 |  |  |
|  | 2 | **Trees/ Palms** |  | 2027-06-07 | 2027-06-22 |  |  |
| A65390 |  | Roadside tree - Cordia sebestena | 14d | 2027-06-07 | 2027-06-22 | A62890, A88420 | 140d |
| A65400 |  | Roadside tree - Parkinsonia aculeata | 14d | 2027-06-07 | 2027-06-22 | A62890, A88420 | 140d |
| A65410 |  | Roadside tree - Dalbergia sissoo | 14d | 2027-06-07 | 2027-06-22 | A62890, A88420 | 140d |
| A65420 |  | Roadside tree - Acacia stenophylla | 14d | 2027-06-07 | 2027-06-22 | A62890, A88420 | 140d |
| A65430 |  | Roadside tree - Hibiscus tiliaceus | 14d | 2027-06-07 | 2027-06-22 | A62890, A88420 | 140d |
| A65440 |  | Roadside tree - Azadirachla indica | 14d | 2027-06-07 | 2027-06-22 | A62890, A88420 | 126d |
|  | 3 | **Miscellaneous Landscaping Items** |  | 2027-06-09 | 2027-06-24 |  |  |
| A65450 |  | Install Precast concrete block paving for sidewalk, mixed grey colour | 14d | 2027-06-09 | 2027-06-24 | A62910, A88420 | 138d |
| A65460 |  | Install Precast concrete block paving for main intrsection, colour light grey | 14d | 2027-06-09 | 2027-06-24 | A62910, A88420 | 138d |
| A65470 |  | install Precast concrete block paving for main intrsection, colour mid grey | 14d | 2027-06-09 | 2027-06-24 | A62910, A88420 | 138d |
| A65480 |  | install Precast concrete block paving for main intrsection, colour dark grey | 14d | 2027-06-09 | 2027-06-24 | A62910, A88420 | 138d |
| A65490 |  | Gravel, mixed dark beige + medium beige + light beige | 14d | 2027-06-09 | 2027-06-24 | A62910, A88420 | 138d |
| A65500 |  | Concrete heel kerb | 14d | 2027-06-09 | 2027-06-24 | A62910, A88420 | 138d |
|  | 1 | **Ground Cover And Shrubs** |  | 2027-06-23 | 2027-07-08 |  |  |
| A65350 |  | Lantana montevidensis | 14d | 2027-06-23 | 2027-07-08 | A65440, A88420 | 126d |
| A65360 |  | Portulaca grandiflora | 14d | 2027-06-23 | 2027-07-08 | A65440, A88420 | 126d |
| A65370 |  | Dodonaea viscosa | 14d | 2027-06-23 | 2027-07-08 | A65440, A88420 | 126d |
| A65380 |  | Atriplex halimus | 14d | 2027-06-23 | 2027-07-08 | A65440, A88420 | 126d |
|  | R22 | **Road 22** |  | 2027-06-05 | 2027-07-06 |  |  |
|  | 2 | **Trees/ Palms** |  | 2027-06-05 | 2027-06-20 |  |  |
| A65550 |  | Roadside tree - Cordia sebestena | 14d | 2027-06-05 | 2027-06-20 | A63030, A88420 | 142d |
| A65560 |  | Roadside tree - Parkinsonia aculeata | 14d | 2027-06-05 | 2027-06-20 | A63030, A88420 | 142d |
| A65570 |  | Roadside tree - Dalbergia sissoo | 14d | 2027-06-05 | 2027-06-20 | A63030, A88420 | 142d |
| A65580 |  | Roadside tree - Acacia stenophylla | 14d | 2027-06-05 | 2027-06-20 | A63030, A88420 | 142d |
| A65590 |  | Roadside tree - Hibiscus tiliaceus | 14d | 2027-06-05 | 2027-06-20 | A63030, A88420 | 142d |
| A65600 |  | Roadside tree - Azadirachla indica | 14d | 2027-06-05 | 2027-06-20 | A63030, A88420 | 128d |
|  | 3 | **Miscellaneous Landscaping Items** |  | 2027-06-07 | 2027-06-22 |  |  |
| A65610 |  | Install Precast concrete block paving for sidewalk, mixed grey colour | 14d | 2027-06-07 | 2027-06-22 | A63050, A88420 | 140d |
| A65620 |  | Install Precast concrete block paving for main intrsection, colour light grey | 14d | 2027-06-07 | 2027-06-22 | A63050, A88420 | 140d |

| ID | WBS | Task | Duration | Start | Finish | Predecessors | Total float |
| --- | --- | --- | --- | --- | --- | --- | --- |
| A65630 |  | install Precast concrete block paving for main intrsection, colour mid grey | 14d | 2027-06-07 | 2027-06-22 | A63050, A88420 | 140d |
| A65640 |  | install Precast concrete block paving for main intrsection, colour dark grey | 14d | 2027-06-07 | 2027-06-22 | A63050, A88420 | 140d |
| A65650 |  | Gravel, mixed dark beige + medium beige + light beige | 14d | 2027-06-07 | 2027-06-22 | A63050, A88420 | 140d |
| A65660 |  | Concrete heel kerb | 14d | 2027-06-07 | 2027-06-22 | A63050, A88420 | 140d |
|  | 1 | **Ground Cover And Shrubs** |  | 2027-06-21 | 2027-07-06 |  |  |
| A65510 |  | Lantana montevidensis | 14d | 2027-06-21 | 2027-07-06 | A65600, A88420 | 128d |
| A65520 |  | Portulaca grandiflora | 14d | 2027-06-21 | 2027-07-06 | A65600, A88420 | 128d |
| A65530 |  | Dodonaea viscosa | 14d | 2027-06-21 | 2027-07-06 | A65600, A88420 | 128d |
| A65540 |  | Atriplex halimus | 14d | 2027-06-21 | 2027-07-06 | A65600, A88420 | 128d |
|  | R23 | **Road 23** |  | 2027-06-05 | 2027-07-06 |  |  |
|  | 2 | **Trees/ Palms** |  | 2027-06-05 | 2027-06-20 |  |  |
| A65710 |  | Roadside tree - Cordia sebestena | 14d | 2027-06-05 | 2027-06-20 | A63170, A88420 | 142d |
| A65720 |  | Roadside tree - Parkinsonia aculeata | 14d | 2027-06-05 | 2027-06-20 | A63170, A88420 | 142d |
| A65730 |  | Roadside tree - Dalbergia sissoo | 14d | 2027-06-05 | 2027-06-20 | A63170, A88420 | 142d |
| A65740 |  | Roadside tree - Acacia stenophylla | 14d | 2027-06-05 | 2027-06-20 | A63170, A88420 | 142d |
| A65750 |  | Roadside tree - Hibiscus tiliaceus | 14d | 2027-06-05 | 2027-06-20 | A63170, A88420 | 142d |
| A65760 |  | Roadside tree - Azadirachla indica | 14d | 2027-06-05 | 2027-06-20 | A63170, A88420 | 128d |
|  | 3 | **Miscellaneous Landscaping Items** |  | 2027-06-07 | 2027-06-22 |  |  |
| A65770 |  | Install Precast concrete block paving for sidewalk, mixed grey colour | 14d | 2027-06-07 | 2027-06-22 | A63190, A88420 | 140d |
| A65780 |  | Install Precast concrete block paving for main intrsection, colour light grey | 14d | 2027-06-07 | 2027-06-22 | A63190, A88420 | 140d |
| A65790 |  | install Precast concrete block paving for main intrsection, colour mid grey | 14d | 2027-06-07 | 2027-06-22 | A63190, A88420 | 140d |
| A65800 |  | install Precast concrete block paving for main intrsection, colour dark grey | 14d | 2027-06-07 | 2027-06-22 | A63190, A88420 | 140d |
| A65810 |  | Gravel, mixed dark beige + medium beige + light beige | 14d | 2027-06-07 | 2027-06-22 | A63190, A88420 | 140d |
| A65820 |  | Concrete heel kerb | 14d | 2027-06-07 | 2027-06-22 | A63190, A88420 | 140d |
|  | 1 | **Ground Cover And Shrubs** |  | 2027-06-21 | 2027-07-06 |  |  |
| A65670 |  | Lantana montevidensis | 14d | 2027-06-21 | 2027-07-06 | A65760, A88420 | 128d |
| A65680 |  | Portulaca grandiflora | 14d | 2027-06-21 | 2027-07-06 | A65760, A88420 | 128d |
| A65690 |  | Dodonaea viscosa | 14d | 2027-06-21 | 2027-07-06 | A65760, A88420 | 128d |
| A65700 |  | Atriplex halimus | 14d | 2027-06-21 | 2027-07-06 | A65760, A88420 | 128d |
|  | R24 | **Road 24** |  | 2027-06-06 | 2027-07-07 |  |  |
|  | 2 | **Trees/ Palms** |  | 2027-06-06 | 2027-06-21 |  |  |
| A65870 |  | Roadside tree - Cordia sebestena | 14d | 2027-06-06 | 2027-06-21 | A63310, A88420 | 141d |
| A65880 |  | Roadside tree - Parkinsonia aculeata | 14d | 2027-06-06 | 2027-06-21 | A63310, A88420 | 141d |
| A65890 |  | Roadside tree - Dalbergia sissoo | 14d | 2027-06-06 | 2027-06-21 | A63310, A88420 | 141d |
| A65900 |  | Roadside tree - Acacia stenophylla | 14d | 2027-06-06 | 2027-06-21 | A63310, A88420 | 141d |
| A65910 |  | Roadside tree - Hibiscus tiliaceus | 14d | 2027-06-06 | 2027-06-21 | A63310, A88420 | 141d |
| A65920 |  | Roadside tree - Azadirachla indica | 14d | 2027-06-06 | 2027-06-21 | A63310, A88420 | 127d |
|  | 3 | **Miscellaneous Landscaping Items** |  | 2027-06-08 | 2027-06-23 |  |  |
| A65930 |  | Install Precast concrete block paving for sidewalk, mixed grey colour | 14d | 2027-06-08 | 2027-06-23 | A63330, A88420 | 139d |
| A65940 |  | Install Precast concrete block paving for main intrsection, colour light grey | 14d | 2027-06-08 | 2027-06-23 | A63330, A88420 | 139d |
| A65950 |  | install Precast concrete block paving for main intrsection, colour mid grey | 14d | 2027-06-08 | 2027-06-23 | A63330, A88420 | 139d |
| A65960 |  | install Precast concrete block paving for main intrsection, colour dark grey | 14d | 2027-06-08 | 2027-06-23 | A63330, A88420 | 139d |
| A65970 |  | Gravel, mixed dark beige + medium beige + light beige | 14d | 2027-06-08 | 2027-06-23 | A63330, A88420 | 139d |
| A65980 |  | Concrete heel kerb | 14d | 2027-06-08 | 2027-06-23 | A63330, A88420 | 139d |
|  | 1 | **Ground Cover And Shrubs** |  | 2027-06-22 | 2027-07-07 |  |  |
| A65830 |  | Lantana montevidensis | 14d | 2027-06-22 | 2027-07-07 | A65920, A88420 | 127d |
| A65840 |  | Portulaca grandiflora | 14d | 2027-06-22 | 2027-07-07 | A65920, A88420 | 127d |
| A65850 |  | Dodonaea viscosa | 14d | 2027-06-22 | 2027-07-07 | A65920, A88420 | 127d |
| A65860 |  | Atriplex halimus | 14d | 2027-06-22 | 2027-07-07 | A65920, A88420 | 127d |
|  | R25 | **Road 25** |  | 2027-06-07 | 2027-06-26 |  |  |
|  | 2 | **Trees/ Palms** |  | 2027-06-07 | 2027-06-22 |  |  |
| A66030 |  | Roadside tree - Cordia sebestena | 14d | 2027-06-07 | 2027-06-22 | A63450, A88420 | 140d |
| A66040 |  | Roadside tree - Parkinsonia aculeata | 14d | 2027-06-07 | 2027-06-22 | A63450, A88420 | 140d |
| A66050 |  | Roadside tree - Dalbergia sissoo | 14d | 2027-06-07 | 2027-06-22 | A63450, A88420 | 140d |
| A66060 |  | Roadside tree - Acacia stenophylla | 14d | 2027-06-07 | 2027-06-22 | A63450, A88420 | 140d |
| A66070 |  | Roadside tree - Hibiscus tiliaceus | 14d | 2027-06-07 | 2027-06-22 | A63450, A88420 | 140d |
| A66080 |  | Roadside tree - Azadirachla indica | 14d | 2027-06-07 | 2027-06-22 | A63450, A88420 | 137d |
|  | 3 | **Miscellaneous Landscaping Items** |  | 2027-06-09 | 2027-06-12 |  |  |
| A66090 |  | Install Precast concrete block paving for sidewalk, mixed grey colour | 3d | 2027-06-09 | 2027-06-12 | A63470, A88420 | 149d |
| A66100 |  | Install Precast concrete block paving for main intrsection, colour light grey | 3d | 2027-06-09 | 2027-06-12 | A63470, A88420 | 149d |
| A66110 |  | install Precast concrete block paving for main intrsection, colour mid grey | 3d | 2027-06-09 | 2027-06-12 | A63470, A88420 | 149d |
| A66120 |  | install Precast concrete block paving for main intrsection, colour dark grey | 3d | 2027-06-09 | 2027-06-12 | A63470, A88420 | 149d |
| A66130 |  | Gravel, mixed dark beige + medium beige + light beige | 3d | 2027-06-09 | 2027-06-12 | A63470, A88420 | 149d |
| A66140 |  | Concrete heel kerb | 3d | 2027-06-09 | 2027-06-12 | A63470, A88420 | 149d |
|  | 1 | **Ground Cover And Shrubs** |  | 2027-06-23 | 2027-06-26 |  |  |
| A65990 |  | Lantana montevidensis | 3d | 2027-06-23 | 2027-06-26 | A66080, A88420 | 137d |
| A66000 |  | Portulaca grandiflora | 3d | 2027-06-23 | 2027-06-26 | A66080, A88420 | 137d |
| A66010 |  | Dodonaea viscosa | 3d | 2027-06-23 | 2027-06-26 | A66080, A88420 | 137d |
| A66020 |  | Atriplex halimus | 3d | 2027-06-23 | 2027-06-26 | A66080, A88420 | 137d |
|  | R251 | **Road 26** |  | 2027-06-07 | 2027-07-08 |  |  |

| ID | WBS | Task | Duration | Start | Finish | Predecessors | Total float |
| --- | --- | --- | --- | --- | --- | --- | --- |
|  | 2 | **Trees/ Palms** |  | 2027-06-07 | 2027-06-22 |  |  |
| A66790 |  | Roadside tree - Cordia sebestena | 14d | 2027-06-07 | 2027-06-22 | A64010, A88420 | 140d |
| A66800 |  | Roadside tree - Parkinsonia aculeata | 14d | 2027-06-07 | 2027-06-22 | A64010, A88420 | 140d |
| A66810 |  | Roadside tree - Dalbergia sissoo | 14d | 2027-06-07 | 2027-06-22 | A64010, A88420 | 140d |
| A66820 |  | Roadside tree - Acacia stenophylla | 14d | 2027-06-07 | 2027-06-22 | A64010, A88420 | 140d |
| A66830 |  | Roadside tree - Hibiscus tiliaceus | 14d | 2027-06-07 | 2027-06-22 | A64010, A88420 | 140d |
| A66840 |  | Roadside tree - Azadirachla indica | 14d | 2027-06-07 | 2027-06-22 | A64010, A88420 | 126d |
|  | 3 | **Miscellaneous Landscaping Items** |  | 2027-06-07 | 2027-06-22 |  |  |
| A66850 |  | Install Precast concrete block paving for sidewalk, mixed grey colour | 14d | 2027-06-07 | 2027-06-22 | A64030, A88420 | 140d |
| A66860 |  | Install Precast concrete block paving for main intrsection, colour light grey | 14d | 2027-06-07 | 2027-06-22 | A64030, A88420 | 140d |
| A66870 |  | install Precast concrete block paving for main intrsection, colour mid grey | 14d | 2027-06-07 | 2027-06-22 | A64030, A88420 | 140d |
| A66880 |  | install Precast concrete block paving for main intrsection, colour dark grey | 14d | 2027-06-07 | 2027-06-22 | A64030, A88420 | 140d |
| A66890 |  | Gravel, mixed dark beige + medium beige + light beige | 14d | 2027-06-07 | 2027-06-22 | A64030, A88420 | 140d |
| A66900 |  | Concrete heel kerb | 14d | 2027-06-07 | 2027-06-22 | A64030, A88420 | 140d |
|  | 1 | **Ground Cover And Shrubs** |  | 2027-06-23 | 2027-07-08 |  |  |
| A66750 |  | Lantana montevidensis | 14d | 2027-06-23 | 2027-07-08 | A66840, A88420 | 126d |
| A66760 |  | Portulaca grandiflora | 14d | 2027-06-23 | 2027-07-08 | A66840, A88420 | 126d |
| A66770 |  | Dodonaea viscosa | 14d | 2027-06-23 | 2027-07-08 | A66840, A88420 | 126d |
| A66780 |  | Atriplex halimus | 14d | 2027-06-23 | 2027-07-08 | A66840, A88420 | 126d |
|  | R2511 | **Road 27** |  | 2027-06-07 | 2027-07-08 |  |  |
|  | 2 | **Trees/ Palms** |  | 2027-06-07 | 2027-06-22 |  |  |
| A66950 |  | Roadside tree - Cordia sebestena | 14d | 2027-06-07 | 2027-06-22 | A64150, A88420 | 140d |
| A66960 |  | Roadside tree - Parkinsonia aculeata | 14d | 2027-06-07 | 2027-06-22 | A64150, A88420 | 140d |
| A66970 |  | Roadside tree - Dalbergia sissoo | 14d | 2027-06-07 | 2027-06-22 | A64150, A88420 | 140d |
| A66980 |  | Roadside tree - Acacia stenophylla | 14d | 2027-06-07 | 2027-06-22 | A64150, A88420 | 140d |
| A66990 |  | Roadside tree - Hibiscus tiliaceus | 14d | 2027-06-07 | 2027-06-22 | A64150, A88420 | 140d |
| A67000 |  | Roadside tree - Azadirachla indica | 14d | 2027-06-07 | 2027-06-22 | A64150, A88420 | 126d |
|  | 3 | **Miscellaneous Landscaping Items** |  | 2027-06-09 | 2027-06-24 |  |  |
| A67010 |  | Install Precast concrete block paving for sidewalk, mixed grey colour | 14d | 2027-06-09 | 2027-06-24 | A64170, A88420 | 138d |
| A67020 |  | Install Precast concrete block paving for main intrsection, colour light grey | 14d | 2027-06-09 | 2027-06-24 | A64170, A88420 | 138d |
| A67030 |  | install Precast concrete block paving for main intrsection, colour mid grey | 14d | 2027-06-09 | 2027-06-24 | A64170, A88420 | 138d |
| A67040 |  | install Precast concrete block paving for main intrsection, colour dark grey | 14d | 2027-06-09 | 2027-06-24 | A64170, A88420 | 138d |
| A67050 |  | Gravel, mixed dark beige + medium beige + light beige | 14d | 2027-06-09 | 2027-06-24 | A64170, A88420 | 138d |
| A67060 |  | Concrete heel kerb | 14d | 2027-06-09 | 2027-06-24 | A64170, A88420 | 138d |
|  | 1 | **Ground Cover And Shrubs** |  | 2027-06-23 | 2027-07-08 |  |  |
| A66910 |  | Lantana montevidensis | 14d | 2027-06-23 | 2027-07-08 | A67000, A88420 | 126d |
| A66920 |  | Portulaca grandiflora | 14d | 2027-06-23 | 2027-07-08 | A67000, A88420 | 126d |
| A66930 |  | Dodonaea viscosa | 14d | 2027-06-23 | 2027-07-08 | A67000, A88420 | 126d |
| A66940 |  | Atriplex halimus | 14d | 2027-06-23 | 2027-07-08 | A67000, A88420 | 126d |
|  | CO2 | **Collector 2** |  | 2027-06-23 | 2027-07-25 |  |  |
|  | 2 | **Trees/ Palms** |  | 2027-06-23 | 2027-07-08 |  |  |
| A66190 |  | Roadside tree - Cordia sebestena | 14d | 2027-06-23 | 2027-07-08 | A63590, A88420 | 126d |
| A66200 |  | Roadside tree - Parkinsonia aculeata | 14d | 2027-06-23 | 2027-07-08 | A63590, A88420 | 126d |
| A66210 |  | Roadside tree - Dalbergia sissoo | 14d | 2027-06-23 | 2027-07-08 | A63590, A88420 | 126d |
| A66220 |  | Roadside tree - Acacia stenophylla | 14d | 2027-06-23 | 2027-07-08 | A63590, A88420 | 126d |
| A66230 |  | Roadside tree - Hibiscus tiliaceus | 14d | 2027-06-23 | 2027-07-08 | A63590, A88420 | 126d |
| A66240 |  | Roadside tree - Azadirachla indica | 14d | 2027-06-23 | 2027-07-08 | A63590, A88420 | 112d |
|  | 3 | **Miscellaneous Landscaping Items** |  | 2027-06-28 | 2027-07-13 |  |  |
| A66250 |  | Install Precast concrete block paving for sidewalk, mixed grey colour | 14d | 2027-06-28 | 2027-07-13 | A63610, A88420 | 122d |
| A66260 |  | Install Precast concrete block paving for main intrsection, colour light grey | 14d | 2027-06-28 | 2027-07-13 | A63610, A88420 | 122d |
| A66270 |  | install Precast concrete block paving for main intrsection, colour mid grey | 14d | 2027-06-28 | 2027-07-13 | A63610, A88420 | 122d |
| A66280 |  | install Precast concrete block paving for main intrsection, colour dark grey | 14d | 2027-06-28 | 2027-07-13 | A63610, A88420 | 122d |
| A66290 |  | Gravel, mixed dark beige + medium beige + light beige | 14d | 2027-06-28 | 2027-07-13 | A63610, A88420 | 122d |
| A66300 |  | Concrete heel kerb | 14d | 2027-06-28 | 2027-07-13 | A63610, A88420 | 122d |
|  | 1 | **Ground Cover And Shrubs** |  | 2027-07-10 | 2027-07-25 |  |  |
| A66150 |  | Lantana montevidensis | 14d | 2027-07-10 | 2027-07-25 | A66240, A88420 | 112d |
| A66160 |  | Portulaca grandiflora | 14d | 2027-07-10 | 2027-07-25 | A66240, A88420 | 112d |
| A66170 |  | Dodonaea viscosa | 14d | 2027-07-10 | 2027-07-25 | A66240, A88420 | 112d |
| A66180 |  | Atriplex halimus | 14d | 2027-07-10 | 2027-07-25 | A66240, A88420 | 112d |
|  | AR1 | **Arterial 1** |  | 2027-07-05 | 2027-12-01 |  |  |
|  | 2 | **Trees/ Palms** |  | 2027-07-05 | 2027-09-27 |  |  |
| A66350 |  | Roadside tree - Cordia sebestena | 14d | 2027-07-05 | 2027-07-20 | A63730, A88420 | 1d |
| A66360 |  | Roadside tree - Parkinsonia aculeata | 3d | 2027-07-21 | 2027-07-24 | A63730, A66350, A88420 | 1d |
| A66370 |  | Roadside tree - Dalbergia sissoo | 14d | 2027-07-25 | 2027-08-09 | A63730, A66360, A88420 | 1d |
| A66380 |  | Roadside tree - Acacia stenophylla | 14d | 2027-08-10 | 2027-08-25 | A63730, A66370, A88420 | 1d |
| A66390 |  | Roadside tree - Hibiscus tiliaceus | 14d | 2027-08-26 | 2027-09-11 | A63730, A66380, A88420 | 1d |
| A66400 |  | Roadside tree - Azadirachla indica | 14d | 2027-09-12 | 2027-09-27 | A63730, A66390, A88420 | 1d |
|  | 3 | **Miscellaneous Landscaping Items** |  | 2027-07-14 | 2027-10-19 |  |  |
| A66410 |  | Install Precast concrete block paving for sidewalk, mixed grey colour | 14d | 2027-07-14 | 2027-07-29 | A63750, A88420 | 38d |
| A66420 |  | Install Precast concrete block paving for main intrsection, colour light grey | 14d | 2027-07-31 | 2027-08-15 | A63750, A66410, A88420 | 38d |

| ID | WBS | Task | Duration | Start | Finish | Predecessors | Total float |
| --- | --- | --- | --- | --- | --- | --- | --- |
| A66430 |  | install Precast concrete block paving for main intrsection, colour mid grey | 14d | 2027-08-16 | 2027-08-31 | A63750, A66420, A88420 | 38d |
| A66440 |  | install Precast concrete block paving for main intrsection, colour dark grey | 14d | 2027-09-01 | 2027-09-16 | A63750, A66430, A88420 | 38d |
| A66450 |  | Gravel, mixed dark beige + medium beige + light beige | 14d | 2027-09-18 | 2027-10-03 | A63750, A66440, A88420 | 38d |
| A66460 |  | Concrete heel kerb | 14d | 2027-10-04 | 2027-10-19 | A63750, A66450, A88420 | 38d |
|  | 1 | **Ground Cover And Shrubs** |  | 2027-09-28 | 2027-12-01 |  |  |
| A66310 |  | Lantana montevidensis | 14d | 2027-09-28 | 2027-10-13 | A66400, A88420 | 1d |
| A66320 |  | Portulaca grandiflora | 14d | 2027-10-14 | 2027-10-30 | A66400, A66310, A88420 | 1d |
| A66330 |  | Dodonaea viscosa | 14d | 2027-10-31 | 2027-11-15 | A66400, A66320, A88420 | 1d |
| A66340 |  | Atriplex halimus | 14d | 2027-11-16 | 2027-12-01 | A66400, A66330, A88420 | 1d |
|  | AR2 | **Arterial 2** |  | 2027-07-13 | 2027-08-05 |  |  |
|  | 2 | **Trees/ Palms** |  | 2027-07-13 | 2027-08-02 |  |  |
| A66510 |  | Roadside tree - Cordia sebestena | 3d | 2027-07-13 | 2027-07-15 | A63870, A88420 | 102d |
| A66520 |  | Roadside tree - Parkinsonia aculeata | 3d | 2027-07-17 | 2027-07-19 | A63870, A66510, A88420 | 102d |
| A66530 |  | Roadside tree - Dalbergia sissoo | 3d | 2027-07-20 | 2027-07-22 | A63870, A66520, A88420 | 102d |
| A66540 |  | Roadside tree - Acacia stenophylla | 3d | 2027-07-24 | 2027-07-26 | A63870, A66530, A88420 | 102d |
| A66550 |  | Roadside tree - Hibiscus tiliaceus | 3d | 2027-07-27 | 2027-07-29 | A63870, A66540, A88420 | 102d |
| A66560 |  | Roadside tree - Azadirachla indica | 3d | 2027-07-31 | 2027-08-02 | A63870, A66550, A88420 | 102d |
|  | 3 | **Miscellaneous Landscaping Items** |  | 2027-07-18 | 2027-08-02 |  |  |
| A66570 |  | Install Precast concrete block paving for sidewalk, mixed grey colour | 14d | 2027-07-18 | 2027-08-02 | A63890, A88420 | 105d |
| A66580 |  | Install Precast concrete block paving for main intrsection, colour light grey | 14d | 2027-07-18 | 2027-08-02 | A63890, A88420 | 105d |
| A66590 |  | install Precast concrete block paving for main intrsection, colour mid grey | 14d | 2027-07-18 | 2027-08-02 | A63890, A88420 | 105d |
| A66600 |  | install Precast concrete block paving for main intrsection, colour dark grey | 14d | 2027-07-18 | 2027-08-02 | A63890, A88420 | 105d |
| A66610 |  | Gravel, mixed dark beige + medium beige + light beige | 14d | 2027-07-18 | 2027-08-02 | A63890, A88420 | 105d |
| A66620 |  | Concrete heel kerb | 14d | 2027-07-18 | 2027-08-02 | A63890, A88420 | 105d |
|  | 1 | **Ground Cover And Shrubs** |  | 2027-08-03 | 2027-08-05 |  |  |
| A66470 |  | Lantana montevidensis | 3d | 2027-08-03 | 2027-08-05 | A66560, A88420 | 102d |
| A66480 |  | Portulaca grandiflora | 3d | 2027-08-03 | 2027-08-05 | A66560, A88420 | 102d |
| A66490 |  | Dodonaea viscosa | 3d | 2027-08-03 | 2027-08-05 | A66560, A88420 | 102d |
| A66500 |  | Atriplex halimus | 3d | 2027-08-03 | 2027-08-05 | A66560, A88420 | 102d |
|  | LBC | **LABOR CAMP** |  | 2027-02-02 | 2027-06-30 |  |  |
|  | RW | **ROAD WORKS** |  | 2027-02-02 | 2027-06-19 |  |  |
|  | DEM | **DEMOLITION** |  | 2027-02-02 | 2027-02-18 |  |  |
| A5450 |  | Demolition of existing Asphalt | 15d | 2027-02-02 | 2027-02-18 | A2620, A2740, A2720, A2710, A2700, A2690, A2680, A4825 | 65d |
| A5460 |  | Demolition of existing Kerbs | 15d | 2027-02-02 | 2027-02-18 | A5450 SS | 65d |
|  | ERT | **EARTHWORKS AND SITE GRADING** |  | 2027-02-20 | 2027-03-25 |  |  |
| A5470 |  | Earthworks - Cut Excavation | 14d | 2027-02-20 | 2027-03-07 | A5450, A5460 | 65d |
| A5480 |  | Embankments to the site with common / suitable excavated material or suitable imported material | 11d | 2027-03-08 | 2027-03-20 | A5470 | 65d |
| A5490 |  | Subgrade | 5d | 2027-03-21 | 2027-03-25 | A5480 | 65d |
|  | AGG | **AGGREGATE BASE COURSE** |  | 2027-03-31 | 2027-04-14 |  |  |
| A5500 |  | Aggregate base course | 13d | 2027-03-31 | 2027-04-14 | A5490, A5810, A5830, A5840, A5820 | 65d |
|  | BIT | **BITUMINOUS CONSTRUCTION** |  | 2027-04-15 | 2027-04-18 |  |  |
| A5510 |  | Bituminous base course (Grading I - Class A), after compaction , including Prime Coat (MC1) (if needed) | 3d | 2027-04-15 | 2027-04-18 | A5500 | 65d |
|  | ASP | **ASPHALT WEARING COURSE** |  | 2027-04-19 | 2027-04-24 |  |  |
| A5520 |  | Bituminous concrete wearing course, after compaction (Grading I - Class A), including tack coat (RC2). | 5d | 2027-04-19 | 2027-04-24 | A5510 | 65d |
|  | PRC | **PRECAST CONCRETE CURB** |  | 2027-04-25 | 2027-05-05 |  |  |
| A5530 |  | Concrete curb, Type (K1A) | 10d | 2027-04-25 | 2027-05-05 | A5520 | 65d |
| A5540 |  | Concrete curb, Type (K1B) | 10d | 2027-04-25 | 2027-05-05 | A5520 | 65d |
|  | PAM | **PAVEMENT MARKINGS** |  | 2027-05-06 | 2027-05-29 |  |  |
| A5550 |  | Retroreflective Thermoplastic White Traffic lines | 3d | 2027-05-06 | 2027-05-09 | A5530, A5540 | 65d |
| A5560 |  | Retroreflective Thermoplastic Yellow Traffic lines | 3d | 2027-05-10 | 2027-05-12 | A5550 | 65d |
| A5580 |  | Ceramic raised pavement markers | 4d | 2027-05-13 | 2027-05-17 | A5560 | 65d |
| A5570 |  | Retroreflective raised pavement markers (Type A) | 5d | 2027-05-18 | 2027-05-23 | A5560, A5580 | 65d |
| A5590 |  | Solar powered lighting cateyes pavement markers | 5d | 2027-05-24 | 2027-05-29 | A5560, A5570 | 86d |
|  | TRS | **TRAFFIC SIGNAGE** |  | 2027-05-24 | 2027-06-19 |  |  |
| A5620 |  | Traffic signs, ground mounted, Sheet Alumenium, Double post | 4d | 2027-05-24 | 2027-05-27 | A5570 | 65d |
| A5610 |  | Traffic signs, ground mounted, 1 Sheet Alumenium, Single post | 8d | 2027-05-29 | 2027-06-06 | A5570, A5620 | 65d |
| A5600 |  | Traffic signs, ground mounted, 2 Sheet Alumenium, Single post | 11d | 2027-06-07 | 2027-06-19 | A5570, A5610 | 65d |
|  | ELE | **Electrical Works "DRY"** |  | 2027-03-08 | 2027-06-14 |  |  |
|  | MVO | **MEDIUM VOLTAGE** |  | 2027-03-08 | 2027-05-19 |  |  |
|  | TRE | **MEDIUM VOLTAGE CABLE TRENCH** |  | 2027-03-08 | 2027-03-18 |  |  |
| A5630 |  | Excavation for Trench size 1.2m wide and 80cm deep | 10d | 2027-03-08 | 2027-03-18 | A5470 | 72d |
|  | DBA | **MEDIUM VOLTAGE CABLES DUCT BANKS** |  | 2027-03-20 | 2027-03-24 |  |  |
| A5640 |  | 4-way Duct Bank (4x200mm duct) | 5d | 2027-03-20 | 2027-03-24 | A5630 | 80d |
|  | CAB | **MEDIUM VOLTAGE CABLES** |  | 2027-03-25 | 2027-05-03 |  |  |
| A5650 |  | Cable: 33KV 3Cx400mm² AL/XLPE/LLDPE unarmored | 10d | 2027-03-25 | 2027-04-05 | A5640 | 80d |
| A5660 |  | Single Core Cables, Copper, 33kV (3x1Cx70mm²,AL/XLPE/PVC). | 2d | 2027-04-06 | 2027-04-07 | A5650 | 92d |
| A5670 |  | Straight joints cables for 36KV 3x400mm² AL/XLPE/LLDPE unarmored | 14d | 2027-04-06 | 2027-04-21 | A5650 | 80d |
| A5680 |  | Cable Termination for 36KV 3Cx400mm² AL/XLPE/LLDPE | 10d | 2027-04-22 | 2027-05-03 | A5670, A5660 | 80d |
|  | TRA | **Liquid-Filled Utility Transformers** |  | 2027-05-04 | 2027-05-19 |  |  |
| A5690 |  | 1000kVA, 33/0.4 KV unit substation | 14d | 2027-05-04 | 2027-05-19 | A5680 | 80d |

| ID | WBS | Task | Duration | Start | Finish | Predecessors | Total float |
| --- | --- | --- | --- | --- | --- | --- | --- |
| A5700 |  | 1500kVA, 33/0.4 KV unit substation | 5d | 2027-05-04 | 2027-05-09 | A5680 | 103d |
|  | LVO | **LOW VOLTAGE "Road"** |  | 2027-03-20 | 2027-06-14 |  |  |
|  | CAB | **LOW VOLTAGE CABLES** |  | 2027-04-12 | 2027-06-05 |  |  |
| A5740 |  | Cables, Copper, (4Cx6mm²,Cu/XLPE/PVC + 1x6mm² PVC/ECC). | 16d | 2027-04-12 | 2027-04-29 | A5750 | 72d |
| A5710 |  | Cables, Copper, (4Cx10mm²,Cu/XLPE/SWA/PVC +1x10mm² PVC/PVC) | 4d | 2027-05-20 | 2027-05-24 | A5690 | 80d |
| A5730 |  | Cables, Aluminium, (4Cx70mm²,AL/XLPE/PVC). | 4d | 2027-05-25 | 2027-05-29 | A5690, A5710 | 80d |
| A5720 |  | Cables, Aluminium, (4Cx300mm²,AL/XLPE/PVC). | 6d | 2027-05-30 | 2027-06-05 | A5690, A5730 | 80d |
|  | CON | **CONDUITS** |  | 2027-03-20 | 2027-04-11 |  |  |
| A5750 |  | 50 mm diameter PVC Conduit | 20d | 2027-03-20 | 2027-04-11 | A5630 | 72d |
|  | LIP | **LIGHTING POLES** |  | 2027-05-01 | 2027-05-11 |  |  |
| A5760 |  | Street Lighting Hot dip galvanized steel 8-meter, 1-meter single arm | 4d | 2027-05-01 | 2027-05-04 | A5740 | 78d |
| A5770 |  | Street Lighting Hot dip galvanized steel 8-meter, double arm | 2d | 2027-05-01 | 2027-05-02 | A5740 | 80d |
| A5780 |  | Street Lighting Hot dip galvanized steel 8-meter, 3-meter single arm | 10d | 2027-05-01 | 2027-05-11 | A5740 | 72d |
|  | STL | **STREET LIGHTING LUMINAIRE** |  | 2027-05-12 | 2027-05-19 |  |  |
| A5790 |  | Street Lighting ( LED) Luminaire with 92 Watt, 13000 Lumen | 7d | 2027-05-12 | 2027-05-19 | A5760, A5770, A5780 | 72d |
|  | ERT | **EARTHING SYSTEM** |  | 2027-05-20 | 2027-06-05 |  |  |
| A5800 |  | Earthing of lighting poles ,masts. feeder pillars , unit substations, RMU, L.V feeders and KWH meter | 14d | 2027-05-20 | 2027-06-05 | A5790 | 72d |
|  | RCD | **ROAD CROSSING DUCTS** |  | 2027-03-27 | 2027-03-30 |  |  |
| A5810 |  | Road crossing ducts, 2 way (2 x 110mm PVC) | 4d | 2027-03-27 | 2027-03-30 | A5490 | 65d |
| A5820 |  | Road crossing ducts, 3 way (3 x 110mm PVC) | 4d | 2027-03-27 | 2027-03-30 | A5490 | 65d |
| A5830 |  | Road crossing ducts, 4 way (4 x 110mm PVC) | 2d | 2027-03-27 | 2027-03-28 | A5490 | 67d |
| A5840 |  | Road crossing ducts,6 way (6 x 110mm PVC) | 3d | 2027-03-27 | 2027-03-29 | A5490 | 66d |
|  | LPA | **LIGHTING PANELS** |  | 2027-06-06 | 2027-06-14 |  |  |
| A5850 |  | Street Lighting Feeder pillars | 3d | 2027-06-06 | 2027-06-08 | A5800 | 72d |
| A5860 |  | installation of concrete wall | 5d | 2027-06-09 | 2027-06-14 | A5850 | 72d |
|  | TEC | **TELECOMMUNICATIONS** |  | 2027-03-08 | 2027-04-01 |  |  |
|  | RCR | **ROAD CROSSING REINFORCED CONCRETE ENCASEMENT DUCTS** |  | 2027-03-08 | 2027-03-11 |  |  |
| A5870 |  | 6 way 50mm HDPE duct | 3d | 2027-03-08 | 2027-03-10 | A5470 | 140d |
| A5880 |  | 6 way 50mm + 12 way 32mm HDPE duct | 2d | 2027-03-08 | 2027-03-09 | A5470 | 141d |
| A5890 |  | 6 way 50mm + 8 way 32mm HDPE duct | 2d | 2027-03-08 | 2027-03-09 | A5470 | 141d |
| A5900 |  | 6 way 50mm + 4 way 32mm HDPE duct | 2d | 2027-03-08 | 2027-03-09 | A5470 | 141d |
| A5910 |  | 6 way 50mm + 2 way 32mm+1way 16mm HDPE duct | 2d | 2027-03-08 | 2027-03-09 | A5470 | 141d |
| A5920 |  | 6 way 50mm + 2 way 32mm | 2d | 2027-03-08 | 2027-03-09 | A5470 | 141d |
| A5930 |  | 12 way 50mm + 8 way 32mm HDPE duct | 3d | 2027-03-08 | 2027-03-10 | A5470 | 140d |
| A5940 |  | 12 way 50mm + 2 way 32mm HDPE duct | 3d | 2027-03-08 | 2027-03-10 | A5470 | 140d |
| A5950 |  | 8 way 32mm HDPE duct | 4d | 2027-03-08 | 2027-03-11 | A5470 | 139d |
| A5960 |  | 4 way 32mm HDPE duct | 2d | 2027-03-08 | 2027-03-09 | A5470 | 141d |
|  | UNR | **UNREINFORCED CONCRETE DUCTS** |  | 2027-03-08 | 2027-03-09 |  |  |
| A5970 |  | HDPE duct | 2d | 2027-03-08 | 2027-03-09 | A5470 | 155d |
|  | DUC | **DUCTS** |  | 2027-03-08 | 2027-03-16 |  |  |
| A5980 |  | 2 x 32 mm diameter HDPE ducts | 4d | 2027-03-08 | 2027-03-11 | A5470 | 139d |
| A5990 |  | 2 x 32 mm +1 x 16mm diameter HDPE ducts | 7d | 2027-03-08 | 2027-03-15 | A5470 | 136d |
| A6000 |  | 8x 32mm diameter HDPE ducts | 2d | 2027-03-08 | 2027-03-09 | A5470 | 141d |
| A6010 |  | 4x 32mm diameter HDPE ducts | 2d | 2027-03-08 | 2027-03-09 | A5470 | 141d |
| A6020 |  | 6 x 50 mm diameter HDPE ducts | 8d | 2027-03-08 | 2027-03-16 | A5470 | 135d |
| A6030 |  | 6 x 50 mm +2 x 32mm diameter HDPE ducts | 2d | 2027-03-08 | 2027-03-09 | A5470 | 141d |
| A6040 |  | 6 x 50 mm +2 x 32mm+1 x 16mm diameter HDPE ducts | 4d | 2027-03-08 | 2027-03-11 | A5470 | 139d |
| A6050 |  | 6 x 50 mm +8 x 32mm diameter HDPE ducts | 2d | 2027-03-08 | 2027-03-09 | A5470 | 141d |
| A6060 |  | 6 x 50 mm +12 x 32mm diameter HDPE ducts | 2d | 2027-03-08 | 2027-03-09 | A5470 | 141d |
| A6070 |  | 12 x 50 mm +8 x 32mm diameter HDPE ducts | 2d | 2027-03-08 | 2027-03-09 | A5470 | 141d |
| A6080 |  | 12 x 50 mm +2x 32mm diameter HDPE ducts | 2d | 2027-03-08 | 2027-03-09 | A5470 | 141d |
| A6090 |  | 1x 16 mm diameter HDPE ducts | 2d | 2027-03-08 | 2027-03-09 | A5470 | 141d |
|  | MAH | **MANHOLES** |  | 2027-03-17 | 2027-04-01 |  |  |
| A6100 |  | Manhole 2000x1000 mm | 14d | 2027-03-17 | 2027-04-01 | A5870, A6090, A5880, A5890, A5900, A5910, A5920, A5960, A5930, A5940, A5950, A6000, A6010, A6030, A6050, A6060, A6070, A6080, A5980, A6040, A5990, A6020 | 135d |
|  | HAH | **HANDHOLES** |  | 2027-03-17 | 2027-03-22 |  |  |
| A6110 |  | Handhole 600x600 mm | 5d | 2027-03-17 | 2027-03-22 | A5870, A6090, A5880, A5890, A5900, A5910, A5920, A5960, A5930, A5940, A5950, A6000, A6010, A6030, A6050, A6060, A6070, A6080, A5980, A6040, A5990, A6020 | 144d |
|  | PWN | **POTABLE WATER NETWORK** |  | 2027-03-08 | 2027-04-29 |  |  |
|  | HDP | **HDPE PIPES 100 SDR 11 (PN 16 Bar)** |  | 2027-03-08 | 2027-03-23 |  |  |
| A6120 |  | 160mm Diameter | 14d | 2027-03-08 | 2027-03-23 | A5470 | 111d |
| A6130 |  | 200mm Diameter | 4d | 2027-03-08 | 2027-03-11 | A5470 | 153d |
|  | VAL | **VALVES** |  | 2027-03-24 | 2027-04-24 |  |  |
| A6150 |  | Wash-out Valves | 5d | 2027-03-24 | 2027-03-29 | A6120 | 111d |
| A6160 |  | Air Valves | 5d | 2027-03-30 | 2027-04-04 | A6120, A6150 | 111d |
| A6140 |  | Gate (Sluice) valves (Direct buried) | 12d | 2027-04-05 | 2027-04-18 | A6120, A6160 | 111d |
| A6170 |  | Valve chambers | 5d | 2027-04-19 | 2027-04-24 | A6140 | 111d |
|  | RCR | **ROAD CROSSING** |  | 2027-04-25 | 2027-04-29 |  |  |
| A6180 |  | HDPE road croosing with dia 160 mm | 5d | 2027-04-25 | 2027-04-29 | A6170 | 111d |
|  | FIN | **FIRE NETWORK** |  | 2027-03-08 | 2027-05-03 |  |  |
|  | HDP | **HDPE PIPES 100 SDR 11 ( PN 16 Bar)** |  | 2027-03-08 | 2027-03-27 |  |  |
| A6190 |  | 160mm Diameter | 17d | 2027-03-08 | 2027-03-27 | A5470 | 108d |

| ID | WBS | Task | Duration | Start | Finish | Predecessors | Total float |
| --- | --- | --- | --- | --- | --- | --- | --- |
| A6200 |  | 200mm Diameter | 5d | 2027-03-08 | 2027-03-13 | A5470 | 152d |
|  | VAL | **VALVES** |  | 2027-03-28 | 2027-04-17 |  |  |
| A6220 |  | Wash-out Valves | 4d | 2027-03-28 | 2027-03-31 | A6190 | 108d |
| A6230 |  | Air Valves | 4d | 2027-04-01 | 2027-04-05 | A6190, A6220 | 108d |
| A6210 |  | Gate (Sluice) valves (Direct buried) | 5d | 2027-04-06 | 2027-04-11 | A6190, A6230 | 108d |
| A6240 |  | Valve chambers | 5d | 2027-04-12 | 2027-04-17 | A6210 | 108d |
|  | VAC | **VALVE CHAMBERS** |  | 2027-03-28 | 2027-04-07 |  |  |
| A6250 |  | Wash out chamber; on 160 mm dia pipeline | 5d | 2027-03-28 | 2027-04-01 | A6190 | 116d |
| A6260 |  | Air valve chamber; on 160 mm dia pipeline | 5d | 2027-04-03 | 2027-04-07 | A6190, A6250 | 116d |
|  | RCR | **Road Crossing** |  | 2027-04-18 | 2027-04-21 |  |  |
| A6730 |  | HDPE road croosing with dia 160 mm | 4d | 2027-04-18 | 2027-04-21 | A6240, A6260 | 108d |
|  | FIH | **Fire Hydrant** |  | 2027-04-22 | 2027-05-03 |  |  |
| A6270 |  | 3-outlet fire hydrant | 10d | 2027-04-22 | 2027-05-03 | A6190, A6730 | 108d |
|  | TSE | **TSE NETWORK** |  | 2027-03-08 | 2027-04-11 |  |  |
|  | HDP | **HDPE PIPES 100 SDR 11 ( PN 16 Bar)** |  | 2027-03-08 | 2027-03-18 |  |  |
| A6280 |  | 90mm Diameter | 6d | 2027-03-08 | 2027-03-14 | A5470 | 110d |
| A6290 |  | 110mm Diameter | 10d | 2027-03-08 | 2027-03-18 | A5470 | 127d |
|  | UPV | **UPVC PIPES IRRIGATION DUCTS** |  | 2027-03-08 | 2027-03-11 |  |  |
| A6300 |  | Pipe with diameter 200 mm. | 4d | 2027-03-08 | 2027-03-11 | A5470 | 153d |
|  | VAL | **VALVES** |  | 2027-03-20 | 2027-03-31 |  |  |
| A6320 |  | Wash-out Valves | 3d | 2027-03-20 | 2027-03-22 | A6280, A6290 | 127d |
| A6330 |  | Air Valves | 3d | 2027-03-23 | 2027-03-25 | A6280, A6290, A6320 | 127d |
| A6310 |  | Gate (Sluice) valves (Direct buried) | 5d | 2027-03-27 | 2027-03-31 | A6280, A6290, A6330 | 127d |
|  | VAC | **VALVE CHAMBERS** |  | 2027-04-01 | 2027-04-10 |  |  |
| A6340 |  | Wash out chambers | 4d | 2027-04-01 | 2027-04-05 | A6310 | 128d |
| A6350 |  | Air Valve chambers | 4d | 2027-04-06 | 2027-04-10 | A6310, A6340 | 128d |
|  | RCR | **ROAD CROSSING** |  | 2027-04-01 | 2027-04-04 |  |  |
| A6360 |  | HDPE road croosing with dia 110 mm | 3d | 2027-04-01 | 2027-04-04 | A6310 | 127d |
|  | IRC | **IRRIGATION CABLES** |  | 2027-04-05 | 2027-04-11 |  |  |
| A6370 |  | Decoder cables 12 AWG between valves and controllers | 6d | 2027-04-05 | 2027-04-11 | A6360 | 127d |
|  | SWN | **SEWERAGE NETWORK** |  | 2027-03-08 | 2027-04-11 |  |  |
|  | GRP | **GRP PIPES** |  | 2027-03-08 | 2027-04-06 |  |  |
| A6380 |  | 150mm Diameter | 6d | 2027-03-08 | 2027-03-14 | A5470 | 127d |
| A6410 |  | 300mm Diameter | 5d | 2027-03-08 | 2027-03-13 | A5470 | 128d |
| A6400 |  | 250mm Diameter | 10d | 2027-03-15 | 2027-03-25 | A5470, A6380 | 131d |
| A6390 |  | 200mm Diameter | 10d | 2027-03-27 | 2027-04-06 | A5470, A6400 | 131d |
|  | MAH | **MANHOLES** |  | 2027-03-15 | 2027-04-11 |  |  |
|  | PCH | **PRECAST MANHOLE** |  | 2027-03-15 | 2027-03-18 |  |  |
| A6420 |  | Precast Manhole ring 1200 mm internal dia. | 4d | 2027-03-15 | 2027-03-18 | A6380, A6410 | 127d |
|  | ISH | **INSPECTION MANHOLES** |  | 2027-03-20 | 2027-04-11 |  |  |
| A6430 |  | Manholes with internal dimensions of 60 cm x 60 cm Phase 1 | 20d | 2027-03-20 | 2027-04-11 | A6420 | 127d |
| A6740 |  | Manholes with internal dimensions of 60 cm x 60 cm Phase 2 | 20d | 2027-03-20 | 2027-04-11 | A6420, A6430 SS, A6430 FF | 127d |
|  | STW | **STORM WATER DRAINAGE NETWORK** |  | 2027-03-08 | 2027-05-16 |  |  |
|  | GRP | **GRP PIPES** |  | 2027-03-08 | 2027-03-30 |  |  |
| A6440 |  | 400mm Diameter | 12d | 2027-03-08 | 2027-03-21 | A5470 | 105d |
| A6450 |  | 500mm Diameter | 10d | 2027-03-08 | 2027-03-18 | A5470 | 107d |
| A6460 |  | 600mm Diameter | 20d | 2027-03-08 | 2027-03-30 | A5470 | 97d |
| A6470 |  | 700mm Diameter | 20d | 2027-03-08 | 2027-03-30 | A5470 | 97d |
| A6480 |  | 800mm Diameter | 6d | 2027-03-08 | 2027-03-14 | A5470 | 111d |
| A6490 |  | 900mm Diameter | 6d | 2027-03-08 | 2027-03-14 | A5470 | 111d |
| A6500 |  | 1000mm Diameter | 5d | 2027-03-08 | 2027-03-13 | A5470 | 112d |
|  | UPV | **UPVC PIPES** |  | 2027-03-08 | 2027-03-23 |  |  |
| A6510 |  | 300mm Diameter | 14d | 2027-03-08 | 2027-03-23 | A5470 | 143d |
| A6520 |  | 400mm Diameter | 4d | 2027-03-08 | 2027-03-11 | A5470 | 113d |
|  | MAH | **MANHOLES** |  | 2027-03-22 | 2027-05-16 |  |  |
|  | 2 | **Precast Manhole 1200** |  | 2027-03-31 | 2027-04-22 |  |  |
| A6530 |  | Precast Manhole ring 1200 mm internal dia. | 20d | 2027-03-31 | 2027-04-22 | A6440, A6520, A6500, A6480, A6490, A6450, A6460, A6470 | 97d |
|  | 1 | **Precast Manhole 1500** |  | 2027-03-22 | 2027-04-10 |  |  |
| A6540 |  | Precast Manhole ring 1500 mm internal dia Phase 1 | 16d | 2027-03-22 | 2027-04-08 | A6440, A6520 | 128d |
| A6750 |  | Precast Manhole ring 1500 mm internal dia Phase 2 | 17d | 2027-03-22 | 2027-04-10 | A6440, A6520, A6540 SS, A6540 FF | 128d |
|  | 3 | **Precast Manhole 2000** |  | 2027-03-22 | 2027-04-08 |  |  |
| A6550 |  | Precast Manhole ring 2000 mm internal dia Phase 1 | 16d | 2027-03-22 | 2027-04-08 | A6440, A6520, A6760 SS, A6760 FF | 129d |
| A6760 |  | Precast Manhole ring 2000 mm internal dia Phase 2 | 15d | 2027-03-22 | 2027-04-07 | A6440, A6520 | 129d |
|  | 4 | **Concrete Catch Basin** |  | 2027-04-24 | 2027-05-16 |  |  |
| A6560 |  | Single Catch basin | 20d | 2027-04-24 | 2027-05-16 | A6530, A6570 SS, A6570 FF | 97d |
| A6570 |  | Double Catch basin | 4d | 2027-04-24 | 2027-04-27 | A6530 | 97d |
|  | 1 | **LANDSCAPE** |  | 2027-03-08 | 2027-06-30 |  |  |
|  | GCS | **GROUND COVER AND SHRUBS** |  | 2027-04-25 | 2027-05-05 |  |  |
| A6580 |  | GROUND COVER AND SHRUBS | 10d | 2027-04-25 | 2027-05-05 | A5520 | 106d |
|  | TRP | **TREES &PALMS** |  | 2027-06-15 | 2027-06-30 |  |  |

| ID | WBS | Task | Duration | Start | Finish | Predecessors | Total float |
| --- | --- | --- | --- | --- | --- | --- | --- |
| A6590 |  | Trees/ Palms Package 1 | 10d | 2027-06-15 | 2027-06-26 | A6580, A5860 | 72d |
| A6770 |  | Trees/ Palms Package 2 | 10d | 2027-06-15 | 2027-06-26 | A6580, A6590 SS, A5860, A6590 FF | 72d |
| A6780 |  | Trees/ Palms Package 3 | 10d | 2027-06-15 | 2027-06-26 | A6580, A6770 SS, A5860, A6770 FF | 72d |
| A6790 |  | Trees/ Palms Package 4 | 10d | 2027-06-20 | 2027-06-30 | A6580, A6780 SS, A6660, A7210, A6560, A6550, A6750, A6510, A6390, A6740, A5590, A5600, A5700, A5720, A5860, A5970, A6100, A6110, A6130, A6180, A6200, A6270, A6300, A6350, A6370, A6780 FF | 68d |
|  | MIS | **MISCELLANEOUS** |  | 2027-05-06 | 2027-05-22 |  |  |
| A6600 |  | Precast concrete block paving for sidewalk | 4d | 2027-05-06 | 2027-05-10 | A5530 | 82d |
| A6610 |  | Precast concrete block paving for main intrsection | 4d | 2027-05-06 | 2027-05-10 | A5530 | 82d |
| A6620 |  | Gravel, mixed | 3d | 2027-05-11 | 2027-05-13 | A6600, A6610 | 82d |
| A6640 |  | Supply and install Compacted sand | 3d | 2027-05-15 | 2027-05-17 | A6600, A6620 | 82d |
| A6630 |  | concrete heel kerb | 4d | 2027-05-18 | 2027-05-22 | A6600, A6640 | 82d |
|  | FEG | **FENCES & GATES** |  | 2027-03-08 | 2027-06-02 |  |  |
| A6650 |  | Fences and Gates Phase 1 | 10d | 2027-03-08 | 2027-03-18 | A5470 | 117d |
| A7030 |  | Fences and Gates Phase 2 | 10d | 2027-03-08 | 2027-03-18 | A5470, A6650 SS, A6650 FF | 117d |
| A7040 |  | Fences and Gates Phase 3 | 10d | 2027-03-08 | 2027-03-18 | A5470, A7030 SS, A7030 FF | 117d |
| A7050 |  | Fences and Gates Phase 4 | 10d | 2027-03-08 | 2027-03-18 | A5470, A7040 SS, A7040 FF | 117d |
| A7060 |  | Fences and Gates Phase 5 | 10d | 2027-03-08 | 2027-03-18 | A5470, A7050 SS, A7050 FF | 117d |
| A7070 |  | Fences and Gates Phase 6 | 10d | 2027-03-20 | 2027-03-30 | A5470, A7060 | 117d |
| A7080 |  | Fences and Gates Phase 7 | 10d | 2027-03-20 | 2027-03-30 | A5470, A7070 SS, A7070 FF | 117d |
| A7090 |  | Fences and Gates Phase 8 | 10d | 2027-03-20 | 2027-03-30 | A5470, A7080 SS, A7080 FF | 117d |
| A7100 |  | Fences and Gates Phase 9 | 10d | 2027-03-20 | 2027-03-30 | A5470, A7090 SS, A7090 FF | 117d |
| A7110 |  | Fences and Gates Phase 10 | 10d | 2027-03-20 | 2027-03-30 | A5470, A7100 SS, A7100 FF | 117d |
| A7120 |  | Fences and Gates Phase 11 | 10d | 2027-03-31 | 2027-04-11 | A5470, A7110 | 117d |
| A7130 |  | Fences and Gates Phase 12 | 10d | 2027-03-31 | 2027-04-11 | A5470, A7120 SS, A7120 FF | 117d |
| A7140 |  | Fences and Gates Phase 13 | 10d | 2027-03-31 | 2027-04-11 | A5470, A7130 SS, A7130 FF | 117d |
| A7150 |  | Fences and Gates Phase 14 | 10d | 2027-03-31 | 2027-04-11 | A5470, A7140 SS, A7140 FF | 117d |
| A7160 |  | Fences and Gates Phase 15 | 10d | 2027-03-31 | 2027-04-11 | A5470, A7150 SS, A7150 FF | 117d |
| A7170 |  | Fences and Gates Phase 16 | 10d | 2027-04-12 | 2027-04-22 | A5470, A7160 | 117d |
| A7180 |  | Fences and Gates Phase 17 | 10d | 2027-04-12 | 2027-04-22 | A5470, A7170 SS, A7170 FF | 117d |
| A7190 |  | Fences and Gates Phase 18 | 10d | 2027-04-12 | 2027-04-22 | A5470, A7180 SS, A7180 FF | 117d |
| A7200 |  | Fences and Gates Phase 19 | 10d | 2027-04-12 | 2027-04-22 | A5470, A7190 SS, A7190 FF | 117d |
| A7210 |  | Fences and Gates Phase 20 | 10d | 2027-05-23 | 2027-06-02 | A5470, A7200 SS, A6630, A7200 FF | 82d |
|  | FUR | **SITE FURNISHINGS** |  | 2027-05-06 | 2027-05-30 |  |  |
| A7000 |  | Site Furnishings Phase 3 | 7d | 2027-05-06 | 2027-05-13 | A5530 | 85d |
| A6990 |  | Site Furnishings Phase 2 | 7d | 2027-05-15 | 2027-05-22 | A5530, A7000, A7000 FF | 85d |
| A6660 |  | Site Furnishings Phase 1 | 7d | 2027-05-23 | 2027-05-30 | A5530, A6990, A6990 FF, A7020 | 85d |
|  | SIR | **SECONDARY IRRIGATION** |  | 2027-03-15 | 2027-04-22 |  |  |
|  | HDP | **HDPE PIPES** |  | 2027-03-15 | 2027-03-30 |  |  |
| A6670 |  | 90 mm PN 10, | 4d | 2027-03-15 | 2027-03-18 | A6280 | 120d |
| A6680 |  | 75 mm PN 10, | 3d | 2027-03-15 | 2027-03-17 | A6280 | 121d |
| A6690 |  | 63 mm PN 10, | 4d | 2027-03-15 | 2027-03-18 | A6280 | 120d |
| A6700 |  | 50 mm PN 10, | 5d | 2027-03-15 | 2027-03-20 | A6280 | 119d |
| A6710 |  | 32 mm PN 10, | 14d | 2027-03-15 | 2027-03-30 | A6280 | 110d |
|  | 1 | **VALVES & FITTINGS** |  | 2027-03-31 | 2027-04-22 |  |  |
| A6720 |  | Valves and Fittings Phase 1 | 20d | 2027-03-31 | 2027-04-22 | A6670, A6710, A6680, A6690, A6700 | 110d |
| A7010 |  | Valves and Fittings Phase 1 | 20d | 2027-03-31 | 2027-04-22 | A6670, A6710, A6720 SS, A6720 FF | 110d |
| A7020 |  | Valves and Fittings Phase 1 | 20d | 2027-03-31 | 2027-04-22 | A6670, A6710, A7010 SS, A7010 FF | 110d |
|  | MOS | **MOSQUE** |  | 2027-02-02 | 2027-09-18 |  |  |
|  | 1 | **Mosque – Foundations** |  | 2027-02-02 | 2027-03-06 |  |  |
| A55800 |  | Excavation for Mosque Footings | 7d | 2027-02-02 | 2027-02-09 | A10620, A10670, A11190, A11200, A93190, A11150 | 0d |
| A55810 |  | RC Footings Reinforcement for Mosque | 12d | 2027-02-10 | 2027-02-23 | A55800, A10600, A10610, A10590 | 0d |
| A55820 |  | RC Footings Concreting for Mosque | 5d | 2027-02-24 | 2027-03-01 | A55810 | 0d |
| A55830 |  | Backfilling & Compaction for Mosque | 4d | 2027-03-02 | 2027-03-06 | A55820, A10500 SS+15d, A10500 FF+15d | 2d |
|  | 4 | **Mosque – Superstructure** |  | 2027-03-07 | 2027-04-24 |  |  |
| A55840 |  | Columns Reinforcement & Shuttering for Mosque | 12d | 2027-03-07 | 2027-03-20 | A55830 | 50d |
| A55850 |  | Columns Concreting for Mosque | 4d | 2027-03-21 | 2027-03-24 | A55840, A10570 | 50d |
| A55860 |  | Slab / beams Formwork & Reinforcement for Mosque | 12d | 2027-03-25 | 2027-04-07 | A55850 | 50d |
| A55870 |  | Slab / beams Concreting for Mosque | 4d | 2027-04-08 | 2027-04-12 | A55860 | 50d |
| A55990 |  | Slab on grade for Mosque | 10d | 2027-04-13 | 2027-04-24 | A55870 | 50d |
|  | 6 | **Mosque – Masonry & Roofing** |  | 2027-05-05 | 2027-05-13 |  |  |
| A55880 |  | External Blockwork walls for Mosque | 8d | 2027-05-05 | 2027-05-13 | A55990, A10340 | 41d |
| A55950 |  | Internal Blockwork walls for Mosque | 8d | 2027-05-05 | 2027-05-13 | A55990, A10340 | 41d |
|  | 5 | **Mosque – Finishes** |  | 2027-06-30 | 2027-09-12 |  |  |
| A55930 |  | MEP First Fix for Mosque | 10d | 2027-06-30 | 2027-07-11 | A55950, A55880, A10820, A10880, A10780, A10370 | 1d |
| A55890 |  | Internal Plastering for Mosque | 15d | 2027-07-07 | 2027-07-24 | A55930 SS+6d, A55930 FF+6d, A10390, A10400, A10480, A10630, A11140 | 1d |
| A55900 |  | Floor Finishes for Mosque | 15d | 2027-07-14 | 2027-07-31 | A55890 SS+6d, A10640, A10440, A10450 | 3d |
| A55910 |  | Ceiling Works for Mosque | 14d | 2027-07-14 | 2027-07-29 | A55890 SS+6d, A10650, A10460 | 4d |
| A55970 |  | Install Doors & Windows | 10d | 2027-07-25 | 2027-08-04 | A55890, A10410, A10420 | 1d |
| A55920 |  | painting and cladding works for Mosque | 12d | 2027-08-01 | 2027-08-14 | A55900, A55910, A10550, A10560, A10430 | 3d |
| A55960 |  | Install handrails / Ladders / GRC works | 10d | 2027-08-05 | 2027-08-16 | A55970, A10360 | 1d |
| A55940 |  | MEP Second Fix for Mosque | 8d | 2027-08-18 | 2027-08-26 | A55920, A55960, A10470, A10900, A10910, A10700, A10830, A10840, A10850, A10860, A10920, A10790, A11220, A10980, A11210 | 0d |

| ID | WBS | Task | Duration | Start | Finish | Predecessors | Total float |
| --- | --- | --- | --- | --- | --- | --- | --- |
| A55980 |  | Required finished works includes Quran shelf / shoe rack and other requirments | 14d | 2027-08-28 | 2027-09-12 | A55920, A55940, A10660 | 0d |
|  | 2 | **MINARET** |  | 2027-03-07 | 2027-09-09 |  |  |
|  | 1 | **Minaret – Foundations** |  | 2027-03-07 | 2027-04-07 |  |  |
| A56000 |  | Excavation for Mosque Footings | 7d | 2027-03-07 | 2027-03-14 | A55800 SS, A55830 | 2d |
| A56010 |  | RC Footings Reinforcement for minaret | 12d | 2027-03-15 | 2027-03-28 | A56000, A10380, A10590 | 2d |
| A56020 |  | RC Footings Concreting for minaret | 5d | 2027-03-29 | 2027-04-03 | A56010 | 2d |
| A56030 |  | Backfilling & Compaction for minaret | 4d | 2027-04-04 | 2027-04-07 | A56020 | 2d |
|  | 2 | **Minaret – RC Structure** |  | 2027-06-19 | 2027-08-17 |  |  |
| A56040 |  | Columns Reinforcement & Shuttering for minaret | 18d | 2027-06-19 | 2027-07-08 | A56030, A10350 | 2d |
| A56050 |  | Columns Concreting for minaret | 18d | 2027-06-28 | 2027-07-18 | A56040 SS+8d, A56040 FF+8d | 2d |
| A56060 |  | Slab / beams Formwork & Reinforcement for minaret | 12d | 2027-07-19 | 2027-08-01 | A56050 | 2d |
| A56070 |  | Slab / beams Concreting for minaret | 4d | 2027-08-02 | 2027-08-05 | A56060 | 2d |
| A56080 |  | Slab on grade for minaret | 10d | 2027-08-07 | 2027-08-17 | A56070 | 2d |
|  | 3 | **Minaret – Finishes** |  | 2027-08-18 | 2027-09-09 |  |  |
| A56090 |  | Block works | 8d | 2027-08-18 | 2027-08-26 | A56080, A10520, A10530 | 2d |
| A56100 |  | Finishes & GRC | 12d | 2027-08-28 | 2027-09-09 | A56090, A10510, A10490, A10330 SS, A10580, A10330 FF | 2d |
|  | 3 | **TOILET & WASH AREA** |  | 2027-04-08 | 2027-09-18 |  |  |
|  | 1 | **Toilet – Foundations** |  | 2027-04-08 | 2027-05-10 |  |  |
| A56110 |  | Excavation for toilet & wash area | 7d | 2027-04-08 | 2027-04-15 | A56030 | 2d |
| A56120 |  | RC Footings Reinforcement for toilet & wash area | 12d | 2027-04-17 | 2027-04-29 | A56110 | 2d |
| A56130 |  | RC Footings Concreting for toilet & wash area | 5d | 2027-05-01 | 2027-05-05 | A56120 | 2d |
| A56140 |  | Backfilling & Compaction for toilet & wash area | 4d | 2027-05-06 | 2027-05-10 | A56130 | 2d |
|  | 2 | **Toilet – Superstructure** |  | 2027-05-11 | 2027-07-10 |  |  |
| A56150 |  | Columns Reinforcement & Shuttering for toilet & wash area | 18d | 2027-05-11 | 2027-05-31 | A56140 | 2d |
| A56160 |  | Columns Concreting for toilet & wash area | 18d | 2027-05-20 | 2027-06-09 | A56150 SS+8d, A56150 FF+8d | 2d |
| A56170 |  | Slab / beams Formwork & Reinforcement for toilet & wash area | 12d | 2027-06-10 | 2027-06-23 | A56160 | 2d |
| A56180 |  | Slab / beams Concreting for toilet & wash area | 4d | 2027-06-24 | 2027-06-28 | A56170 | 2d |
| A56190 |  | Slab on grade for toilet & wash area | 10d | 2027-06-29 | 2027-07-10 | A56180 | 2d |
|  | 3 | **Toilet – MEP Works** |  | 2027-07-11 | 2027-07-19 |  |  |
| A56200 |  | External Blockwork walls for toilet & wash area | 8d | 2027-07-11 | 2027-07-19 | A56190, A11070 | 2d |
| A56210 |  | Internal walls for toilet & wash area | 8d | 2027-07-11 | 2027-07-19 | A56190, A56190 FF | 2d |
|  | 4 | **Toilet – Finishes** |  | 2027-07-20 | 2027-09-18 |  |  |
| A56260 |  | MEP First Fix for toilet & wash area | 8d | 2027-07-20 | 2027-07-28 | A56210, A56200 | 2d |
| A56220 |  | Internal Plastering for toilet & wash area | 12d | 2027-07-27 | 2027-08-09 | A56260 SS+6d, A56260 FF+6d | 2d |
| A56230 |  | Floor Finishes for toilet & wash area | 13d | 2027-08-03 | 2027-08-17 | A56220 SS+6d | 2d |
| A56240 |  | Ceiling Works for toilet & wash area | 12d | 2027-08-03 | 2027-08-16 | A56220 SS+6d | 3d |
| A56290 |  | Install Doors & Windows for toilet & wash area | 8d | 2027-08-10 | 2027-08-18 | A56220 | 13d |
| A56250 |  | Painting and cladding works for toilet & wash area | 10d | 2027-08-18 | 2027-08-29 | A56230, A56240 | 2d |
| A56280 |  | Sanitary fixtures installation | 8d | 2027-08-19 | 2027-08-28 | A56290 | 13d |
| A56270 |  | MEP Second Fix | 6d | 2027-08-30 | 2027-09-05 | A56250, A10890, A10690, A10970 | 6d |
| A56300 |  | Installation of toilet partitions | 10d | 2027-08-30 | 2027-09-09 | A56250 | 2d |
| A56310 |  | Setting out for hygiene & sanitary accessories | 5d | 2027-09-13 | 2027-09-18 | A56300, A56280, A56270, A56100, A55980 | 0d |
|  | 7 | **Portable cabins** |  | 2027-02-02 | 2027-05-04 |  |  |
|  | 1 | **Prepration works and foundations** |  | 2027-02-02 | 2027-02-20 |  |  |
| A56320 |  | Excavation for cabin foundations / pads | 6d | 2027-02-02 | 2027-02-08 | A93270, A4825 | 17d |
| A56330 |  | RC foundations / plinths | 6d | 2027-02-09 | 2027-02-15 | A56320 | 117d |
| A56340 |  | Backfilling & compaction around pads | 4d | 2027-02-16 | 2027-02-20 | A56330 | 152d |
|  | 2 | **Cabins installation** |  | 2027-02-21 | 2027-05-04 |  |  |
| A56350 |  | Alignment & leveling of cabins | 8d | 2027-02-21 | 2027-03-01 | A56340 | 152d |
| A56360 |  | Electrical conduits & DB installation | 7d | 2027-03-02 | 2027-03-09 | A56350 | 157d |
| A56370 |  | Plumbing & drainage rough-in | 7d | 2027-03-02 | 2027-03-09 | A56350 | 157d |
| A56380 |  | Power sockets & switches | 8d | 2027-03-02 | 2027-03-10 | A56350 | 152d |
| A56390 |  | AC units installation | 4d | 2027-03-11 | 2027-03-15 | A56380 | 152d |
| A56450 |  | Final inspection & snag rectification | 10d | 2027-04-14 | 2027-04-25 | A56440 | 117d |
| A56460 |  | Final cleaning & handover | 8d | 2027-04-26 | 2027-05-04 | A56450, A56360, A56370, A56390 | 117d |
|  | 3 | **Parking & Landscape** |  | 2027-02-16 | 2027-04-13 |  |  |
| A56400 |  | Parking sub-base & kerbstone works | 10d | 2027-02-16 | 2027-02-27 | A56330 | 117d |
| A56410 |  | Asphalt base & wearing course | 12d | 2027-02-28 | 2027-03-13 | A56400 | 117d |
| A56420 |  | Parking line marking & signage | 8d | 2027-03-14 | 2027-03-22 | A56410 | 117d |
| A56430 |  | Interlock & walkways | 9d | 2027-03-23 | 2027-04-01 | A56420 | 117d |
| A56440 |  | Softscape & irrigation works | 10d | 2027-04-03 | 2027-04-13 | A56420, A56430 | 117d |
|  | 1 | **Factories Area** |  | 2027-02-09 | 2027-08-14 |  |  |
|  | LR 02 | **Storm Network** |  | 2027-02-09 | 2027-08-14 |  |  |
|  | MH-32-01 /MH-32A | **LINE 01** |  | 2027-02-09 | 2027-04-13 |  |  |
| A93580 |  | Excavation | 8d | 2027-02-09 | 2027-02-17 | A1920, A56320 | 17d |
| A93590 |  | Pipe Laying | 14d | 2027-02-18 | 2027-03-06 | A93580 SS+8d | 17d |
| A93600 |  | Install Manholes | 14d | 2027-02-18 | 2027-03-06 | A93580 SS+8d | 35d |
| A93610 |  | Testing & Inspection | 6d | 2027-03-14 | 2027-03-20 | A93590 FS+6d | 17d |
| A93620 |  | Backfilling & Compaction | 12d | 2027-03-14 | 2027-03-27 | A93610 SS, A93600 SS, A93610 FF, A93600 FF | 17d |
| A93630 |  | Catch Basin installation and backfilling | 21d | 2027-03-21 | 2027-04-13 | A93620 SS+6d, A93620 FF+6d | 17d |

| ID | WBS | Task | Duration | Start | Finish | Predecessors | Total float |
| --- | --- | --- | --- | --- | --- | --- | --- |
|  | MH-32-A-04 /MH-32A-03 | **LINE 06** |  | 2027-04-01 | 2027-06-26 |  |  |
| A93400 |  | Excavation | 18d | 2027-04-01 | 2027-04-21 | A93460 | 29d |
| A93410 |  | Pipe Laying | 21d | 2027-04-11 | 2027-05-04 | A93400 SS+8d | 29d |
| A93420 |  | Install Manholes | 21d | 2027-04-11 | 2027-05-04 | A93400 SS+8d | 35d |
| A93430 |  | Testing & Inspection | 6d | 2027-05-12 | 2027-05-18 | A93410 FS+6d, A93420 | 29d |
| A93440 |  | Backfilling & Compaction | 12d | 2027-05-12 | 2027-05-25 | A93430 SS, A93420 SS, A93430 FF | 29d |
| A93450 |  | Catch Basin installation and backfilling | 21d | 2027-06-02 | 2027-06-26 | A93440 SS+6d, A93510, A93440 FF+6d | 17d |
|  | MH-32-A-05 /MH-32A-04 | **LINE 07** |  | 2027-04-22 | 2027-07-20 |  |  |
| A93280 |  | Excavation | 18d | 2027-04-22 | 2027-05-12 | A93400 | 32d |
| A93290 |  | Pipe Laying | 21d | 2027-05-02 | 2027-05-25 | A93280 SS+8d | 32d |
| A93300 |  | Install Manholes | 21d | 2027-05-02 | 2027-05-25 | A93280 SS+8d | 38d |
| A93310 |  | Testing & Inspection | 6d | 2027-06-02 | 2027-06-08 | A93290 FS+6d, A93300 | 32d |
| A93320 |  | Backfilling & Compaction | 12d | 2027-06-02 | 2027-06-15 | A93310 SS, A93300 SS, A93310 FF | 32d |
| A93330 |  | Catch Basin installation and backfilling | 21d | 2027-06-27 | 2027-07-20 | A93320 SS+6d, A93450, A93320 FF+6d | 17d |
|  | MH-32-A-06 /MH-32A-05 | **LINE 08** |  | 2027-05-13 | 2027-08-14 |  |  |
| A93340 |  | Excavation | 18d | 2027-05-13 | 2027-06-02 | A93280 | 35d |
| A93350 |  | Pipe Laying | 21d | 2027-05-23 | 2027-06-15 | A93340 SS+8d, A93340 FF+8d | 35d |
| A93360 |  | Install Manholes | 18d | 2027-05-23 | 2027-06-12 | A93340 SS+8d, A93340 FF+8d | 44d |
| A93370 |  | Testing & Inspection | 6d | 2027-06-23 | 2027-06-29 | A93350 FS+6d, A93360 | 35d |
| A93380 |  | Backfilling & Compaction | 12d | 2027-06-23 | 2027-07-06 | A93370 SS, A93360 SS, A93370 FF | 35d |
| A93390 |  | Catch Basin installation and backfilling | 21d | 2027-07-21 | 2027-08-14 | A93380 SS+6d, A93330, A93380 FF+6d | 17d |
|  | MH-32A-02 /MH-32A-01 | **LINE 02** |  | 2027-02-18 | 2027-05-08 |  |  |
| A93520 |  | Excavation | 18d | 2027-02-18 | 2027-03-10 | A93580 | 23d |
| A93530 |  | Pipe Laying | 21d | 2027-02-28 | 2027-03-23 | A93520 SS+8d | 23d |
| A93540 |  | Install Manholes | 21d | 2027-02-28 | 2027-03-23 | A93520 SS+8d | 41d |
| A93550 |  | Testing & Inspection | 6d | 2027-03-31 | 2027-04-06 | A93530 FS+6d | 23d |
| A93560 |  | Backfilling & Compaction | 12d | 2027-03-31 | 2027-04-13 | A93550 SS, A93540 SS, A93550 FF, A93540 FF | 23d |
| A93570 |  | Catch Basin installation and backfilling | 21d | 2027-04-14 | 2027-05-08 | A93560 SS+6d, A93630, A93560 FF+6d | 17d |
|  | MH-32A-03 /MH-32A-02 | **LINE 03** |  | 2027-03-11 | 2027-06-01 |  |  |
| A93460 |  | Excavation | 18d | 2027-03-11 | 2027-03-31 | A93520 | 26d |
| A93470 |  | Pipe Laying | 21d | 2027-03-21 | 2027-04-13 | A93460 SS+8d | 26d |
| A93480 |  | Install Manholes | 21d | 2027-03-21 | 2027-04-13 | A93460 SS+8d | 44d |
| A93490 |  | Testing & Inspection | 6d | 2027-04-21 | 2027-04-27 | A93470 FS+6d | 26d |
| A93500 |  | Backfilling & Compaction | 12d | 2027-04-21 | 2027-05-04 | A93490 SS, A93480 SS, A93490 FF, A93480 FF | 26d |
| A93510 |  | Catch Basin installation and backfilling | 21d | 2027-05-09 | 2027-06-01 | A93500 SS+6d, A93570, A93500 FF+6d | 17d |
|  | 2 | **Rehabilitate Road** |  | 2027-08-15 | 2027-11-01 |  |  |
| A93640 |  | Existing Asphalt milling / Demolishing | 14d | 2027-08-15 | 2027-08-30 | A93390, A5600 | 17d |
| A93650 |  | Removal & disposal of damaged asphalt | 14d | 2027-08-17 | 2027-09-01 | A93640 SS+2d, A93640 FF+2d | 17d |
| A93660 |  | Aggregate base course replacement | 14d | 2027-08-29 | 2027-09-13 | A93650 SS+10d, A93650 FF+10d | 17d |
| A93670 |  | Compaction & level check | 14d | 2027-09-09 | 2027-09-25 | A93660 SS+10d, A93660 FF+10d | 17d |
| A93680 |  | Prime coat | 4d | 2027-09-26 | 2027-09-29 | A93670 | 17d |
| A93690 |  | Asphalt wearing course | 18d | 2027-09-28 | 2027-10-18 | A93680 SS+2d, A93680 FF+2d | 17d |
| A93700 |  | Asphalt compaction & finishing | 18d | 2027-09-30 | 2027-10-20 | A93690 SS+2d, A93690 FF+2d | 17d |
| A93710 |  | Hardscape, Road markings & signage reinstatement | 10d | 2027-10-21 | 2027-11-01 | A93700 | 17d |
|  | 3 | **Project Saving Quantities** |  | 2027-11-16 | 2027-12-01 |  |  |
| A93720 |  | Project Saving Quantities | 14d | 2027-11-16 | 2027-12-01 | A92670 | 1d |
|  | T&C | **Testing & Commissionin** |  | 2026-09-15 | 2027-12-01 |  |  |
|  | 1 | **Storm Network Testing & Commissioning Zone A** |  | 2027-01-17 | 2027-01-30 |  |  |
| A93230 |  | Testing & Commissioning of Storm Network for Zone A | 12d | 2027-01-17 | 2027-01-30 | A68220, A68620, A69070, A69220, A69420, A69570, A69720, A69870, A69970, A70170, A70520, A70920, A71220, A71470, A71820, A74170 | 4d |
|  | 2 | **Sewage Network Testing & Commissioning Zone A** |  | 2027-01-18 | 2027-02-01 |  |  |
| A93240 |  | Testing & Commissioning of Sewage Network for Zone A | 13d | 2027-01-18 | 2027-02-01 | A39740, A41340, A48890, A49340, A49690, A49890 | 1d |
|  | 3 | **Potable Water Network Testing & Commissioning Zone A** |  | 2027-01-25 | 2027-02-01 |  |  |
| A93180 |  | Testing & Commissioning of potable Network for Zone A | 7d | 2027-01-25 | 2027-02-01 | A86660, A86740, A86810, A86880, A86950, A87020, A87090, A87160, A87230, A87300, A87370, A87440, A87510, A87580, A87650, A87720, A87790, A87280, A87350, A87560, A87420, A87630, A87210, A87490, A87700, A87770, A86630, A86860, A86930, A87000, A87070, A87140, A86720, A86790 | 2d |
|  | 4 | **MV Network Testing & Commissioning Zone A** |  | 2026-09-15 | 2026-09-20 |  |  |
| A93210 |  | Testing & Commissioning of MV Network for Zone B | 5d | 2026-09-15 | 2026-09-20 | A84200, A84130, A84060 | 10d |
|  | 5 | **Storm Network Testing & Commissioning Zone B** |  | 2027-01-13 | 2027-02-03 |  |  |
| A93250 |  | Testing & Commissioning of Storm Network for Zone B | 19d | 2027-01-13 | 2027-02-03 | A67370, A67620, A75420, A78720, A79670, A80020, A81620, A92810, A92870, A92930, A92990, A93050, A93110, A93170 | 0d |
|  | 6 | **Sewage Network Testing & Commissioning Zone B** |  | 2027-01-20 | 2027-02-01 |  |  |
| A93220 |  | Testing & Commissioning of Sewage Network for Zone B | 11d | 2027-01-20 | 2027-02-01 | A50990, A51040, A51190, A51090, A51240, A51340, A51140, A51290, A51390, A51540, A51440, A51590, A51740, A51490, A51640, A51790, A52040, A51690, A51840, A52090, A52340, A51890, A52140, A52390, A52740, A51940, A52190, A52440, A52790, A53090, A55190, A51990, A52240, A52490, A52840, A53140, A55240, A52290, A52540, A52890, A53190, A55290, A52590, A52940, A53240, A55340, A52640, A52990, A53290, A55390, A52690, A53040, A53340, A55440, A53390, A55490, A53440, A55540, A53490, A55590, A53540, A55640, A53590, A49940, A55690, A53640, A49990, A55740, A53690, A50040, A55790, A53740, A50090, A50140, A53790, A50190, A50290, A53840, A50240, A50590, A53890, A50340, A50640, A53940, A50390, A50690, A53990, A50440, A50740, A54040, A50490, A54090, A50540, A54140, A50790, A54190, A50840, A54240, A50890, A50940, A54290, A54340, A54390, A54440, A54490, A54540, A54590, A54640, A54690, A54740, A54790, A54840, A54890, A54940, A54990, A55040, A55090, A55140 | 1d |
|  | 7 | **Potable water Network Testing & Commissioning Zone B** |  | 2027-01-14 | 2027-02-01 |  |  |
| A93190 |  | Testing & Commissioning of potable Network for Zone A | 16d | 2027-01-14 | 2027-02-01 | A87860, A87930, A88000, A88070, A88140, A88630, A88290, A88350, A88280, A88210, A88420, A88490, A88560 | 0d |
|  | 8 | **MV Network Testing & Commissioning Zone B** |  | 2026-09-16 | 2026-10-01 |  |  |
| A93200 |  | Testing & Commissioning of MV Network for Zone B | 14d | 2026-09-16 | 2026-10-01 | A86390, A86320, A86250, A86180 | 0d |
|  | 9 | **Testing & Commissioning for the Remaining Works** |  | 2027-07-01 | 2027-12-01 |  |  |
| A93760 |  | Testing & Commissioning for Labor Camp | 30d | 2027-07-01 | 2027-08-04 | A6560, A6780, A6790 | 103d |
| A93750 |  | Testing & Commissioning for Mosque Area | 20d | 2027-09-19 | 2027-10-11 | A56310, A55980 | 45d |
| A93740 |  | Testing & Commissioning for Factory Area | 10d | 2027-11-02 | 2027-11-13 | A93390, A93710 | 17d |
| A93730 |  | Testing & Commissioning of Remaining Electrical Works | 10d | 2027-11-21 | 2027-12-01 | A84330, A84280, A84230, A86420, A86470, A86520, A86570 | 1d |
|  | 2 | **Close-out and Handover** |  | 2027-09-19 | 2027-12-02 |  |  |
|  | 3 | **Documentation & As-Built** |  | 2027-09-19 | 2027-10-04 |  |  |

| ID | WBS | Task | Duration | Start | Finish | Predecessors | Total float |
| --- | --- | --- | --- | --- | --- | --- | --- |
| A92740 |  | Complete As Built Drawings submission | 14d | 2027-09-19 | 2027-10-04 | A56460, A56310, A6790, A84360, A86450, A86500, A86550, A86600, A84260, A84310 | 0d |
| A92750 |  | Complete Commissioning Reports | 14d | 2027-09-19 | 2027-10-04 | A92740 SS | 0d |
|  | 4 | **Handover & TOC** |  | 2027-10-05 | 2027-10-28 |  |  |
| A92720 |  | Snag List Clearance | 21d | 2027-10-05 | 2027-10-28 | A92740, A92750 | 0d |
| A92730 |  | Final Site Walkdown | 21d | 2027-10-05 | 2027-10-28 | A92740, A92750 | 0d |
|  | 5 | **Demobilization** |  | 2027-10-30 | 2027-12-02 |  |  |
| A92670 |  | Removal of temporary site facilities | 15d | 2027-10-30 | 2027-11-15 | A92720, A92730 | 0d |
| A92680 |  | Removal of temporary utilities, fencing & access gates | 15d | 2027-10-30 | 2027-11-15 | A92720, A92730 | 0d |
| A92690 |  | Demobilization of construction equipment & machinery | 15d | 2027-10-30 | 2027-11-15 | A92720, A92730 | 0d |
| A92700 |  | Final site cleaning & housekeeping | 15d | 2027-11-16 | 2027-12-02 | A92670, A92680, A92690 | 0d |
| A92710 |  | Final site inspection & clearance | 15d | 2027-11-16 | 2027-12-02 | A92700 SS | 0d |

## Version 2 (data date 2026-10-03, saved 2026-10-06, file Updated Schedule.xer)

Last finish stays 2027-12-02. Complete tasks 0 → 3296.

Added:

| ID | Task | Duration | Start | Finish | Predecessors | Resources |
| --- | --- | --- | --- | --- | --- | --- |
| A7670 | Guard Rails | 14d | 2025-12-06 A | 2026-01-29 A | A1120 SS | Physical Units |
| A7860 | CCTV Pole | 14d | 2025-12-06 A | 2026-01-29 A | A1120 SS | Physical Units |
| A8670 | Guard Rails | 14d | 2025-12-06 A | 2026-01-29 A | A7670 | Physical Units |
| A8860 | CCTV Pole | 14d | 2025-12-06 A | 2026-01-29 A | A7860 | Physical Units |
| A9680 | Guard Rails | 10d | 2025-12-06 A | 2026-01-29 A | A8670 | Physical Units |
| A9870 | CCTV Pole | 16d | 2025-12-06 A | 2026-01-29 A | A8860 | Physical Units |
| A10680 | Guard Rails | 28d | 2026-12-07 | 2027-01-07 | A9680, A11110 | labor [280 h]; Physical Units [2910126 h] |
| A10870 | CCTV Pole | 112d | 2026-10-03 | 2027-02-09 | A9870 FS+14d | labor [1120 h]; Physical Units [5727128 h] |

Removed: A11230 Asphalt Wearing Course; Testing & Commissioning for the Remaining Works; A93760 Testing & Commissioning for Labor Camp; A93750 Testing & Commissioning for Mosque Area; A93740 Testing & Commissioning for Factory Area; A93730 Testing & Commissioning of Remaining Electrical Works

Changed:

| ID | Task | Start | Finish | Complete | Total float | Predecessors |
| --- | --- | --- | --- | --- | --- | --- |
| A1120 | Start Project Commencement Date and Receiving IFC documents | 2025-12-03 A | 2025-12-03 A | 0% → 100% | 0d → none |  |
| A4750 | Site preparation, plans, material and engineering submittals | 2026-01-01 → 2026-01-03 A (+2d) | 2026-01-01 → 2026-01-03 A (+2d) | 0% → 100% | 0d → none |  |
| A4800 | Completion of Road Works | 2026-10-01 → 2027-01-05 (+96d) | 2026-10-01 → 2027-01-05 (+96d) |  | 0d → -81.42d |  |
| A4845 | Completion of Telecommunication | 2027-02-02 → 2027-03-13 (+39d) | 2027-02-02 → 2027-03-13 (+39d) |  | 1d → -31.9d |  |
| A4820 | Completion of Sewage Network | 2027-02-01 → 2027-03-22 (+49d) | 2027-02-01 → 2027-03-22 (+49d) |  | 1d → -40.26d |  |
| A4810 | Completion of MV works | 2026-10-01 → 2027-04-13 (+194d) | 2026-10-01 → 2027-04-13 (+194d) |  | 0d → -165.31d |  |
| A4815 | Completion of Storm Network | 2027-02-03 → 2027-05-08 (+94d) | 2027-02-03 → 2027-05-08 (+94d) |  | 0d → -79.2d | A93250 FF, A93230 FF, A73170, A88330 → A93250 FF, A93230 FF, A73170, A88330, A72570 |
| A6800 | Completion of Potable water Network | 2027-02-01 → 2027-05-13 (+101d) | 2027-02-01 → 2027-05-13 (+101d) |  | 2d → -84.1d |  |
| A4825 | Completion of Irrigation Network | 2027-02-01 → 2027-05-24 (+112d) | 2027-02-01 → 2027-05-24 (+112d) |  | 2d → -93.3d |  |
| A4835 | Completion of Landscape | 2027-12-01 → 2027-10-07 (-55d) | 2027-12-01 → 2027-10-07 (-55d) |  | 1d → 48.3d | A59040 FF, A59050 FF, A59060 FF, A59070 FF, A59080 FF, A59100 FF, A59110 FF, A59120 FF, A59130 FF, A59140 FF, A59150 FF, A59160 FF, A59170 FF, A59180 FF, A59190 FF, A59900 FF, A59910 FF, A59920 FF, A59930 FF, A59940 FF, A59960 FF, A59970 FF, A59980 FF, A59990 FF, A60000 FF, A60010 FF, A59860 FF, A59870 FF, A59880 FF, A59890 FF, A60060 FF, A60070 FF, A60080 FF, A60090 FF, A60100 FF, A60120 FF, A60130 FF, A60140 FF, A60150 FF, A60160 FF, A60170 FF, A60020 FF, A60030 FF, A60040 FF, A60050 FF, A60220 FF, A60230 FF, A60240 FF, A60250 FF, A60260 FF, A60280 FF, A60290 FF, A60300 FF, A60310 FF, A60320 FF, A60330 FF, A60180 FF, A60190 FF, A60200 FF, A60210 FF, A60380 FF, A60390 FF, A60400 FF, A60410 FF, A60420 FF, A60440 FF, A60450 FF, A60460 FF, A60470 FF, A60480 FF, A60490 FF, A60340 FF, A60350 FF, A60360 FF, A60370 FF, A60540 FF, A60550 FF, A60560 FF, A60570 FF, A60580 FF, A60600 FF, A60610 FF, A60620 FF, A60630 FF, A60640 FF, A60650 FF, A60500 FF, A60510 FF, A60520 FF, A60530 FF, A60700 FF, A60710 FF, A60720 FF, A60730 FF, A60740 FF, A60760 FF, A60770 FF, A60780 FF, A60790 FF, A60800 FF, A60810 FF, A60660 FF, A60670 FF, A60680 FF, A60690 FF, A60860 FF, A60870 FF, A60880 FF, A60890 FF, A60900 FF, A60920 FF, A60930 FF, A60940 FF, A60950 FF, A60960 FF, A60970 FF, A60820 FF, A60830 FF, A60840 FF, A60850 FF, A61020 FF, A61030 FF, A61040 FF, A61050 FF, A61060 FF, A61080 FF, A61090 FF, A61100 FF, A61110 FF, A61120 FF, A61130 FF, A60980 FF, A60990 FF, A61000 FF, A61010 FF, A61180 FF, A61190 FF, A61200 FF, A61210 FF, A61220 FF, A61240 FF, A61250 FF, A61260 FF, A61270 FF, A61280 FF, A61290 FF, A61140 FF, A61150 FF, A61160 FF, A61170 FF, A61340 FF, A61350 FF, A61360 FF, A61370 FF, A61380 FF, A61400 FF, A61410 FF, A61420 FF, A61430 FF, A61440 FF, A61450 FF, A61300 FF, A61310 FF, A61320 FF, A61330 FF, A61500 FF, A61510 FF, A61520 FF, A61530 FF, A61540 FF, A61560 FF, A61570 FF, A61580 FF, A61590 FF, A61600 FF, A61610 FF, A61460 FF, A61470 FF, A61480 FF, A61490 FF, A61660 FF, A61670 FF, A61680 FF, A61690 FF, A61700 FF, A61720 FF, A61730 FF, A61740 FF, A61750 FF, A61760 FF, A61770 FF, A61620 FF, A61630 FF, A61640 FF, A61650 FF, A61820 FF, A61830 FF, A61840 FF, A61850 FF, A61860 FF, A61880 FF, A61890 FF, A61900 FF, A61910 FF, A61920 FF, A61930 FF, A61780 FF, A61790 FF, A61800 FF, A61810 FF, A61980 FF, A61990 FF, A62000 FF, A62010 FF, A62020 FF, A62040 FF, A62050 FF, A62060 FF, A62070 FF, A62080 FF, A62090 FF, A61940 FF, A61950 FF, A61960 FF, A61970 FF, A62140 FF, A62150 FF, A62160 FF, A62170 FF, A62180 FF, A62200 FF, A62210 FF, A62220 FF, A62230 FF, A62240 FF, A62250 FF, A62100 FF, A62110 FF, A62120 FF, A62130 FF, A62300 FF, A62310 FF, A62320 FF, A62330 FF, A62340 FF, A62360 FF, A62370 FF, A62380 FF, A62390 FF, A62400 FF, A62410 FF, A62260 FF, A62270 FF, A62280 FF, A62290 FF, A62460 FF, A62470 FF, A62480 FF, A62490 FF, A62500 FF, A62520 FF, A62530 FF, A62540 FF, A62550 FF, A62560 FF, A62570 FF, A62420 FF, A62430 FF, A62440 FF, A62450 FF, A64190 FF, A64200 FF, A64210 FF, A64220 FF, A64230 FF, A64250 FF, A64260 FF, A64270 FF, A64280 FF, A64290 FF, A64300 FF, A64310 FF, A64320 FF, A64330 FF, A64340 FF, A65070 FF, A65080 FF, A65090 FF, A65100 FF, A65110 FF, A65130 FF, A65140 FF, A65150 FF, A65160 FF, A65170 FF, A65180 FF, A65030 FF, A65040 FF, A65050 FF, A65060 FF, A65230 FF, A65240 FF, A65250 FF, A65260 FF, A65270 FF, A65290 FF, A65300 FF, A65310 FF, A65320 FF, A65330 FF, A65340 FF, A65190 FF, A65200 FF, A65210 FF, A65220 FF, A65390 FF, A65400 FF, A65410 FF, A65420 FF, A65430 FF, A65450 FF, A65460 FF, A65470 FF, A65480 FF, A65490 FF, A65500 FF, A65350 FF, A65360 FF, A65370 FF, A65380 FF, A65550 FF, A65560 FF, A65570 FF, A65580 FF, A65590 FF, A65610 FF, A65620 FF, A65630 FF, A65640 FF, A65650 FF, A65660 FF, A65510 FF, A65520 FF, A65530 FF, A65540 FF, A65710 FF, A65720 FF, A65730 FF, A65740 FF, A65750 FF, A65770 FF, A65780 FF, A65790 FF, A65800 FF, A65810 FF, A65820 FF, A65670 FF, A65680 FF, A65690 FF, A65700 FF, A65870 FF, A65880 FF, A65890 FF, A65900 FF, A65910 FF, A65930 FF, A65940 FF, A65950 FF, A65960 FF, A65970 FF, A65980 FF, A65830 FF, A65840 FF, A65850 FF, A65860 FF, A66030 FF, A66040 FF, A66050 FF, A66060 FF, A66070 FF, A66090 FF, A66100 FF, A66110 FF, A66120 FF, A66130 FF, A66140 FF, A65990 FF, A66000 FF, A66010 FF, A66020 FF, A66790 FF, A66800 FF, A66810 FF, A66820 FF, A66830 FF, A66850 FF, A66860 FF, A66870 FF, A66880 FF, A66890 FF, A66900 FF, A66750 FF, A66760 FF, A66770 FF, A66780 FF, A66950 FF, A66960 FF, A66970 FF, A66980 FF, A66990 FF, A67010 FF, A67020 FF, A67030 FF, A67040 FF, A67050 FF, A67060 FF, A66910 FF, A66920 FF, A66930 FF, A66940 FF, A66190 FF, A66200 FF, A66210 FF, A66220 FF, A66230 FF, A66250 FF, A66260 FF, A66270 FF, A66280 FF, A66290 FF, A66300 FF, A66150 FF, A66160 FF, A66170 FF, A66180 FF, A66460 FF, A66340 FF, A66570 FF, A66580 FF, A66590 FF, A66600 FF, A66610 FF, A66620 FF, A66470 FF, A66480 FF, A66490 FF, A66500 FF, A86420 FF, A86470 FF, A86520 FF, A86570 FF, Asphalt Wearing Course → A59040 FF, A59050 FF, A59060 FF, A59070 FF, A59080 FF, A59100 FF, A59110 FF, A59120 FF, A59130 FF, A59140 FF, A59150 FF, A59160 FF, A59170 FF, A59180 FF, A59190 FF, A59900 FF, A59910 FF, A59920 FF, A59930 FF, A59940 FF, A59960 FF, A59970 FF, A59980 FF, A59990 FF, A60000 FF, A60010 FF, A59860 FF, A59870 FF, A59880 FF, A59890 FF, A60060 FF, A60070 FF, A60080 FF, A60090 FF, A60100 FF, A60120 FF, A60130 FF, A60140 FF, A60150 FF, A60160 FF, A60170 FF, A60020 FF, A60030 FF, A60040 FF, A60050 FF, A60220 FF, A60230 FF, A60240 FF, A60250 FF, A60260 FF, A60280 FF, A60290 FF, A60300 FF, A60310 FF, A60320 FF, A60330 FF, A60180 FF, A60190 FF, A60200 FF, A60210 FF, A60380 FF, A60390 FF, A60400 FF, A60410 FF, A60420 FF, A60440 FF, A60450 FF, A60460 FF, A60470 FF, A60480 FF, A60490 FF, A60340 FF, A60350 FF, A60360 FF, A60370 FF, A60540 FF, A60550 FF, A60560 FF, A60570 FF, A60580 FF, A60600 FF, A60610 FF, A60620 FF, A60630 FF, A60640 FF, A60650 FF, A60500 FF, A60510 FF, A60520 FF, A60530 FF, A60700 FF, A60710 FF, A60720 FF, A60730 FF, A60740 FF, A60760 FF, A60770 FF, A60780 FF, A60790 FF, A60800 FF, A60810 FF, A60660 FF, A60670 FF, A60680 FF, A60690 FF, A60860 FF, A60870 FF, A60880 FF, A60890 FF, A60900 FF, A60920 FF, A60930 FF, A60940 FF, A60950 FF, A60960 FF, A60970 FF, A60820 FF, A60830 FF, A60840 FF, A60850 FF, A61020 FF, A61030 FF, A61040 FF, A61050 FF, A61060 FF, A61080 FF, A61090 FF, A61100 FF, A61110 FF, A61120 FF, A61130 FF, A60980 FF, A60990 FF, A61000 FF, A61010 FF, A61180 FF, A61190 FF, A61200 FF, A61210 FF, A61220 FF, A61240 FF, A61250 FF, A61260 FF, A61270 FF, A61280 FF, A61290 FF, A61140 FF, A61150 FF, A61160 FF, A61170 FF, A61340 FF, A61350 FF, A61360 FF, A61370 FF, A61380 FF, A61400 FF, A61410 FF, A61420 FF, A61430 FF, A61440 FF, A61450 FF, A61300 FF, A61310 FF, A61320 FF, A61330 FF, A61500 FF, A61510 FF, A61520 FF, A61530 FF, A61540 FF, A61560 FF, A61570 FF, A61580 FF, A61590 FF, A61600 FF, A61610 FF, A61460 FF, A61470 FF, A61480 FF, A61490 FF, A61660 FF, A61670 FF, A61680 FF, A61690 FF, A61700 FF, A61720 FF, A61730 FF, A61740 FF, A61750 FF, A61760 FF, A61770 FF, A61620 FF, A61630 FF, A61640 FF, A61650 FF, A61820 FF, A61830 FF, A61840 FF, A61850 FF, A61860 FF, A61880 FF, A61890 FF, A61900 FF, A61910 FF, A61920 FF, A61930 FF, A61780 FF, A61790 FF, A61800 FF, A61810 FF, A61980 FF, A61990 FF, A62000 FF, A62010 FF, A62020 FF, A62040 FF, A62050 FF, A62060 FF, A62070 FF, A62080 FF, A62090 FF, A61940 FF, A61950 FF, A61960 FF, A61970 FF, A62140 FF, A62150 FF, A62160 FF, A62170 FF, A62180 FF, A62200 FF, A62210 FF, A62220 FF, A62230 FF, A62240 FF, A62250 FF, A62100 FF, A62110 FF, A62120 FF, A62130 FF, A62300 FF, A62310 FF, A62320 FF, A62330 FF, A62340 FF, A62360 FF, A62370 FF, A62380 FF, A62390 FF, A62400 FF, A62410 FF, A62260 FF, A62270 FF, A62280 FF, A62290 FF, A62460 FF, A62470 FF, A62480 FF, A62490 FF, A62500 FF, A62520 FF, A62530 FF, A62540 FF, A62550 FF, A62560 FF, A62570 FF, A62420 FF, A62430 FF, A62440 FF, A62450 FF, A64190 FF, A64200 FF, A64210 FF, A64220 FF, A64230 FF, A64250 FF, A64260 FF, A64270 FF, A64280 FF, A64290 FF, A64300 FF, A64310 FF, A64320 FF, A64330 FF, A64340 FF, A65070 FF, A65080 FF, A65090 FF, A65100 FF, A65110 FF, A65130 FF, A65140 FF, A65150 FF, A65160 FF, A65170 FF, A65180 FF, A65030 FF, A65040 FF, A65050 FF, A65060 FF, A65230 FF, A65240 FF, A65250 FF, A65260 FF, A65270 FF, A65290 FF, A65300 FF, A65310 FF, A65320 FF, A65330 FF, A65340 FF, A65190 FF, A65200 FF, A65210 FF, A65220 FF, A65390 FF, A65400 FF, A65410 FF, A65420 FF, A65430 FF, A65450 FF, A65460 FF, A65470 FF, A65480 FF, A65490 FF, A65500 FF, A65350 FF, A65360 FF, A65370 FF, A65380 FF, A65550 FF, A65560 FF, A65570 FF, A65580 FF, A65590 FF, A65610 FF, A65620 FF, A65630 FF, A65640 FF, A65650 FF, A65660 FF, A65510 FF, A65520 FF, A65530 FF, A65540 FF, A65710 FF, A65720 FF, A65730 FF, A65740 FF, A65750 FF, A65770 FF, A65780 FF, A65790 FF, A65800 FF, A65810 FF, A65820 FF, A65670 FF, A65680 FF, A65690 FF, A65700 FF, A65870 FF, A65880 FF, A65890 FF, A65900 FF, A65910 FF, A65930 FF, A65940 FF, A65950 FF, A65960 FF, A65970 FF, A65980 FF, A65830 FF, A65840 FF, A65850 FF, A65860 FF, A66030 FF, A66040 FF, A66050 FF, A66060 FF, A66070 FF, A66090 FF, A66100 FF, A66110 FF, A66120 FF, A66130 FF, A66140 FF, A65990 FF, A66000 FF, A66010 FF, A66020 FF, A66790 FF, A66800 FF, A66810 FF, A66820 FF, A66830 FF, A66850 FF, A66860 FF, A66870 FF, A66880 FF, A66890 FF, A66900 FF, A66750 FF, A66760 FF, A66770 FF, A66780 FF, A66950 FF, A66960 FF, A66970 FF, A66980 FF, A66990 FF, A67010 FF, A67020 FF, A67030 FF, A67040 FF, A67050 FF, A67060 FF, A66910 FF, A66920 FF, A66930 FF, A66940 FF, A66190 FF, A66200 FF, A66210 FF, A66220 FF, A66230 FF, A66250 FF, A66260 FF, A66270 FF, A66280 FF, A66290 FF, A66300 FF, A66150 FF, A66160 FF, A66170 FF, A66180 FF, A66460 FF, A66340 FF, A66570 FF, A66580 FF, A66590 FF, A66600 FF, A66610 FF, A66620 FF, A66470 FF, A66480 FF, A66490 FF, A66500 FF, A86420 FF, A86470 FF, A86520 FF, A86570 FF |
| A4830 | Project Finish |  |  |  |  | A92700 FF, A84230 FF, A84280 FF, A84330 FF, A92710 FF, A4750 FF, A4845 FF, A4810 FF, A4800 FF, A4815 FF, A4835 FF, A4820 FF, A4825 FF, A6800 FF, A93710 FF, A93720, A56790, A62920, A63060, A63200, A63340, A63480, A63620, A63760, A63900, A62710, A56930, A58610, A58750, A58890, A59030, A62880, A64780, A64920, A57070, A57210, A57350, A57490, A57630, A57770, A57910, A58050, A58190, A58330, A58470, A66740, A63990, A64000, A64020, A64040, A64180, Testing & Commissioning of Remaining Electrical Works, Testing & Commissioning for Factory Area, Testing & Commissioning for Mosque Area, Testing & Commissioning for Labor Camp → A92700 FF, A84230 FF, A84280 FF, A84330 FF, A92710 FF, A4750 FF, A4845 FF, A4810 FF, A4800 FF, A4815 FF, A4835 FF, A4820 FF, A4825 FF, A6800 FF, A93710 FF, A93720, A56790, A62920, A63060, A63200, A63340, A63480, A63620, A63760, A63900, A62710, A56930, A58610, A58750, A58890, A59030, A62880, A64780, A64920, A57070, A57210, A57350, A57490, A57630, A57770, A57910, A58050, A58190, A58330, A58470, A66740, A63990, A64000, A64020, A64040, A64180 |
| PRE-MOB | **Pre-Mobilization** | 2025-12-03 → 2025-12-07 (+4d) | 2026-01-04 → 2026-01-03 (-1d) |  |  |  |
| 1 | **General Requirements** | 2025-12-03 → 2025-12-07 (+4d) | 2026-01-04 → 2026-01-03 (-1d) |  |  |  |
| 1 | **Submittals** | 2025-12-03 → 2025-12-07 (+4d) | 2025-12-27 → 2026-01-03 (+7d) |  |  |  |
| A4260 | Material List Submittal | 2025-12-03 → 2025-12-07 A (+4d) | 2025-12-27 → 2026-01-03 A (+7d) | 0% → 100% | 78d → none |  |
| A4640 | Offices Moblization Layout Sumittal | 2025-12-03 → 2025-12-07 A (+4d) | 2025-12-14 → 2026-01-03 A (+20d) | 0% → 100% | 0d → none |  |
| A4660 | Traffic Management Plan Submittal | 2025-12-03 → 2025-12-07 A (+4d) | 2025-12-27 → 2026-01-03 A (+7d) | 0% → 100% | 38d → none |  |
| A4670 | Logistics Plan Submittal | 2025-12-03 → 2025-12-07 A (+4d) | 2025-12-27 → 2026-01-03 A (+7d) | 0% → 100% | 38d → none |  |
| A4680 | Execution Plan Submittal | 2025-12-03 → 2025-12-07 A (+4d) | 2025-12-27 → 2026-01-03 A (+7d) | 0% → 100% | 38d → none |  |
| A4690 | Safety Mangment plan Submittal | 2025-12-03 → 2025-12-07 A (+4d) | 2025-12-27 → 2026-01-03 A (+7d) | 0% → 100% | 38d → none |  |
| A4700 | Geotechnical Report Submittal | 2025-12-03 → 2025-12-07 A (+4d) | 2025-12-27 → 2026-01-03 A (+7d) | 0% → 100% | 38d → none |  |
| A4710 | Project Quality Plan Submittal | 2025-12-03 → 2025-12-07 A (+4d) | 2025-12-27 → 2026-01-03 A (+7d) | 0% → 100% | 38d → none |  |
| A4720 | Baseline Schedule Submittal | 2025-12-03 → 2025-12-07 A (+4d) | 2025-12-27 → 2026-01-03 A (+7d) | 0% → 100% | 38d → none |  |
| 2 | **Approvals** | 2025-12-15 → 2025-12-07 (-8d) | 2026-01-04 → 2026-01-03 (-1d) |  |  |  |
| A2930 | Traffic Management Plan Approval | 2025-12-28 → 2025-12-07 A (-21d) | 2026-01-04 → 2026-01-03 A (-1d) | 0% → 100% | 38d → none |  |
| A2940 | Logistics Plan Approval | 2025-12-28 → 2025-12-07 A (-21d) | 2026-01-04 → 2026-01-03 A (-1d) | 0% → 100% | 38d → none |  |
| A2950 | Execution Plan Approval | 2025-12-28 → 2025-12-07 A (-21d) | 2026-01-04 → 2026-01-03 A (-1d) | 0% → 100% | 38d → none |  |
| A2960 | Safety Mangment plan Approval | 2025-12-28 → 2025-12-07 A (-21d) | 2026-01-04 → 2026-01-03 A (-1d) | 0% → 100% | 38d → none |  |
| A2970 | Geotechnical Report Approval | 2025-12-28 → 2025-12-07 A (-21d) | 2026-01-04 → 2026-01-03 A (-1d) | 0% → 100% | 38d → none |  |
| A2980 | Project Quality Plan Approval | 2025-12-28 → 2025-12-07 A (-21d) | 2026-01-04 → 2026-01-03 A (-1d) | 0% → 100% | 38d → none |  |
| A2990 | Baseline Schedule Approval | 2025-12-28 → 2025-12-07 A (-21d) | 2026-01-04 → 2026-01-03 A (-1d) | 0% → 100% | 38d → none |  |
| A4270 | Material List Approval | 2025-12-28 → 2025-12-07 A (-21d) | 2026-01-04 → 2026-01-03 A (-1d) | 0% → 100% | 78d → none |  |
| A4650 | Offices Moblization Layout Approval | 2025-12-15 → 2025-12-07 A (-8d) | 2025-12-17 → 2026-01-03 A (+17d) | 0% → 100% | 0d → none |  |
| MOB | **Mobilization** | 2025-12-18 → 2025-12-07 (-11d) | 2026-01-01 → 2026-01-03 (+2d) |  |  |  |
| A4730 | Clear & Grub for Offices & Access Road | 2025-12-18 → 2025-12-07 A (-11d) | 2025-12-24 → 2026-01-03 A (+10d) | 0% → 100% | 0d → none |  |
| A4760 | Construct Parking Sheds | 2025-12-20 → 2025-12-07 A (-13d) | 2026-01-01 → 2026-01-03 A (+2d) | 0% → 100% | 0d → none |  |
| A4770 | Construct Site Offices & Storage | 2025-12-18 → 2025-12-07 A (-11d) | 2026-01-01 → 2026-01-03 A (+2d) | 0% → 100% | 0d → none |  |
| A4780 | Construct Temporary Fence | 2025-12-18 → 2025-12-07 A (-11d) | 2026-01-01 → 2026-01-03 A (+2d) | 0% → 100% | 0d → none |  |
| ENG | **ENGINEERING** | 2025-12-03 → 2025-12-06 (+3d) | 2026-01-04 → 2026-09-28 (+267d) |  |  |  |
| ZN1 | **Zone A** | 2025-12-03 → 2025-12-06 (+3d) | 2026-01-01 → 2026-01-29 (+28d) |  |  |  |
| EW | **Earth Work** | 2025-12-03 → 2025-12-06 (+3d) | 2026-01-01 → 2026-01-29 (+28d) |  |  |  |
| SB | **Submittals** | 2025-12-03 → 2025-12-06 (+3d) | 2025-12-18 → 2026-01-29 (+42d) |  |  |  |
| A1000 | NGL Submittal | 2025-12-03 → 2025-12-06 A (+3d) | 2025-12-18 → 2026-01-29 A (+42d) | 0% → 100% | 0d → none |  |
| APP | **Approvals** | 2025-12-20 → 2025-12-06 (-14d) | 2026-01-01 → 2026-01-29 (+28d) |  |  |  |
| A1010 | NGL Approval | 2025-12-20 → 2025-12-06 A (-14d) | 2026-01-01 → 2026-01-29 A (+28d) | 0% → 100% | 0d → none |  |
| ST | **Storm Network Drawings** | 2025-12-03 → 2025-12-06 (+3d) | 2026-01-01 → 2026-01-29 (+28d) |  |  |  |
| SB | **Submittals** | 2025-12-03 → 2025-12-06 (+3d) | 2025-12-18 → 2026-01-29 (+42d) |  |  |  |
| A1020 | Overall Layout Plan Submittal | 2025-12-03 → 2025-12-06 A (+3d) | 2025-12-18 → 2026-01-29 A (+42d) | 0% → 100% | 0d → none |  |
| A1030 | Plan & Profiles Submittal | 2025-12-03 → 2025-12-06 A (+3d) | 2025-12-18 → 2026-01-29 A (+42d) | 0% → 100% | 0d → none |  |
| A1040 | General Typical Plans Submittal | 2025-12-03 → 2025-12-06 A (+3d) | 2025-12-18 → 2026-01-29 A (+42d) | 0% → 100% | 0d → none |  |
| A1050 | Storm Tie - In Details Submittal | 2025-12-03 → 2025-12-06 A (+3d) | 2025-12-18 → 2026-01-29 A (+42d) | 0% → 100% | 0d → none |  |
| A1060 | Chamber Details Submittal | 2025-12-03 → 2025-12-06 A (+3d) | 2025-12-18 → 2026-01-29 A (+42d) | 0% → 100% | 0d → none |  |
| APP | **Approvals** | 2025-12-20 → 2025-12-06 (-14d) | 2026-01-01 → 2026-01-29 (+28d) |  |  |  |
| A1070 | Overall Layout Plan Approval | 2025-12-20 → 2025-12-06 A (-14d) | 2026-01-01 → 2026-01-29 A (+28d) | 0% → 100% | 0d → none |  |
| A1080 | Plan & Profiles Approval | 2025-12-20 → 2025-12-06 A (-14d) | 2026-01-01 → 2026-01-29 A (+28d) | 0% → 100% | 0d → none |  |
| A1090 | General Typical Plans Approval | 2025-12-20 → 2025-12-06 A (-14d) | 2026-01-01 → 2026-01-29 A (+28d) | 0% → 100% | 0d → none |  |
| A1100 | Storm Tie - In Details Approval | 2025-12-20 → 2025-12-06 A (-14d) | 2026-01-01 → 2026-01-29 A (+28d) | 0% → 100% | 0d → none |  |
| A1110 | Chamber Details Approval | 2025-12-20 → 2025-12-06 A (-14d) | 2026-01-01 → 2026-01-29 A (+28d) | 0% → 100% | 0d → none |  |
| SW | **Sewage Network Drawings** | 2025-12-03 → 2025-12-06 (+3d) | 2026-01-01 → 2026-01-29 (+28d) |  |  |  |
| SB | **Submittals** | 2025-12-03 → 2025-12-06 (+3d) | 2025-12-18 → 2026-01-29 (+42d) |  |  |  |
| A1130 | Overall Layout Plan Submittal | 2025-12-03 → 2025-12-06 A (+3d) | 2025-12-18 → 2026-01-29 A (+42d) | 0% → 100% | 0d → none |  |
| A1140 | Plan & Profiles Submittal | 2025-12-03 → 2025-12-06 A (+3d) | 2025-12-18 → 2026-01-29 A (+42d) | 0% → 100% | 0d → none |  |
| A1150 | General Typical Plans Submittal | 2025-12-03 → 2025-12-06 A (+3d) | 2025-12-18 → 2026-01-29 A (+42d) | 0% → 100% | 0d → none |  |
| A1160 | Sewage Tie - In Details Submittal | 2025-12-03 → 2025-12-06 A (+3d) | 2025-12-18 → 2026-01-29 A (+42d) | 0% → 100% | 0d → none |  |
| A1170 | Chamber Details Submittal | 2025-12-03 → 2025-12-06 A (+3d) | 2025-12-18 → 2026-01-29 A (+42d) | 0% → 100% | 0d → none |  |
| APP | **Approvals** | 2025-12-20 → 2025-12-06 (-14d) | 2026-01-01 → 2026-01-29 (+28d) |  |  |  |
| A1180 | Overall Layout Plan Approval | 2025-12-20 → 2025-12-06 A (-14d) | 2026-01-01 → 2026-01-29 A (+28d) | 0% → 100% | 0d → none |  |
| A1190 | Plan & Profiles Approval | 2025-12-20 → 2025-12-06 A (-14d) | 2026-01-01 → 2026-01-29 A (+28d) | 0% → 100% | 0d → none |  |
| A1200 | General Typical Plans Approval | 2025-12-20 → 2025-12-06 A (-14d) | 2026-01-01 → 2026-01-29 A (+28d) | 0% → 100% | 0d → none |  |
| A1210 | Sewage Tie - In Details Approval | 2025-12-20 → 2025-12-06 A (-14d) | 2026-01-01 → 2026-01-29 A (+28d) | 0% → 100% | 0d → none |  |

| ID | Task | Start | Finish | Complete | Total float |
| --- | --- | --- | --- | --- | --- |
| A1220 | Chamber Details Approval | 2025-12-20 → 2025-12-06 A (-14d) | 2026-01-01 → 2026-01-29 A (+28d) | 0% → 100% | 0d → none |
| BC | **Box Culverts** | 2025-12-03 → 2025-12-06 (+3d) | 2026-01-01 → 2026-01-29 (+28d) |  |  |
| SB | **Submittals** | 2025-12-03 → 2025-12-06 (+3d) | 2025-12-18 → 2026-01-29 (+42d) |  |  |
| A1230 | Setting out Layout Submittal | 2025-12-03 → 2025-12-06 A (+3d) | 2025-12-18 → 2026-01-29 A (+42d) | 0% → 100% | 0d → none |
| A1240 | Typical Details Submittal | 2025-12-03 → 2025-12-06 A (+3d) | 2025-12-18 → 2026-01-29 A (+42d) | 0% → 100% | 0d → none |
| A1250 | Concrete Dim.& Reinforcement details Submittal | 2025-12-03 → 2025-12-06 A (+3d) | 2025-12-18 → 2026-01-29 A (+42d) | 0% → 100% | 0d → none |
| APP | **Approvals** | 2025-12-20 → 2025-12-06 (-14d) | 2026-01-01 → 2026-01-29 (+28d) |  |  |
| A1260 | Setting out Layout Approval | 2025-12-20 → 2025-12-06 A (-14d) | 2026-01-01 → 2026-01-29 A (+28d) | 0% → 100% | 0d → none |
| A1270 | Typical Details Approval | 2025-12-20 → 2025-12-06 A (-14d) | 2026-01-01 → 2026-01-29 A (+28d) | 0% → 100% | 0d → none |
| A1280 | Concrete Dim.& Reinforcement details Approval | 2025-12-20 → 2025-12-06 A (-14d) | 2026-01-01 → 2026-01-29 A (+28d) | 0% → 100% | 0d → none |
| PT | **Potable Network Drawings** | 2025-12-03 → 2025-12-06 (+3d) | 2026-01-01 → 2026-01-29 (+28d) |  |  |
| SB | **Submittals** | 2025-12-03 → 2025-12-06 (+3d) | 2025-12-18 → 2026-01-29 (+42d) |  |  |
| A1290 | Overall Layout Plan Submittal | 2025-12-03 → 2025-12-06 A (+3d) | 2025-12-18 → 2026-01-29 A (+42d) | 0% → 100% | 0d → none |
| A1300 | Master Plan Submittal | 2025-12-03 → 2025-12-06 A (+3d) | 2025-12-18 → 2026-01-29 A (+42d) | 0% → 100% | 0d → none |
| A1310 | Water Schedules Submittal | 2025-12-03 → 2025-12-06 A (+3d) | 2025-12-18 → 2026-01-29 A (+42d) | 0% → 100% | 0d → none |
| A1320 | General Typical Plans Submittal | 2025-12-03 → 2025-12-06 A (+3d) | 2025-12-18 → 2026-01-29 A (+42d) | 0% → 100% | 0d → none |
| A1330 | General Typical Details Submittal | 2025-12-03 → 2025-12-06 A (+3d) | 2025-12-18 → 2026-01-29 A (+42d) | 0% → 100% | 0d → none |
| APP | **Approvals** | 2025-12-20 → 2025-12-06 (-14d) | 2026-01-01 → 2026-01-29 (+28d) |  |  |
| A1340 | Overall Layout Plan Approval | 2025-12-20 → 2025-12-06 A (-14d) | 2026-01-01 → 2026-01-29 A (+28d) | 0% → 100% | 0d → none |
| A1350 | Master Plan Approval | 2025-12-20 → 2025-12-06 A (-14d) | 2026-01-01 → 2026-01-29 A (+28d) | 0% → 100% | 0d → none |
| A1360 | Water Schedules Approval | 2025-12-20 → 2025-12-06 A (-14d) | 2026-01-01 → 2026-01-29 A (+28d) | 0% → 100% | 0d → none |
| A1370 | General Typical Plans Approval | 2025-12-20 → 2025-12-06 A (-14d) | 2026-01-01 → 2026-01-29 A (+28d) | 0% → 100% | 0d → none |
| A1380 | General Typical Details Approval | 2025-12-20 → 2025-12-06 A (-14d) | 2026-01-01 → 2026-01-29 A (+28d) | 0% → 100% | 0d → none |
| IR | **Irrigation Network Drawings** | 2025-12-03 → 2025-12-06 (+3d) | 2026-01-01 → 2026-01-29 (+28d) |  |  |
| SB | **Submittals** | 2025-12-03 → 2025-12-06 (+3d) | 2025-12-18 → 2026-01-29 (+42d) |  |  |
| A1390 | Overall Layout Plan Submittal | 2025-12-03 → 2025-12-06 A (+3d) | 2025-12-18 → 2026-01-29 A (+42d) | 0% → 100% | 0d → none |
| A1400 | Master Plan Submittal | 2025-12-03 → 2025-12-06 A (+3d) | 2025-12-18 → 2026-01-29 A (+42d) | 0% → 100% | 0d → none |
| A1410 | Water Schedules Submittal | 2025-12-03 → 2025-12-06 A (+3d) | 2025-12-18 → 2026-01-29 A (+42d) | 0% → 100% | 0d → none |
| A1420 | General Typical Plans Submittal | 2025-12-03 → 2025-12-06 A (+3d) | 2025-12-18 → 2026-01-29 A (+42d) | 0% → 100% | 0d → none |
| A1430 | General Typical Details Submittal | 2025-12-03 → 2025-12-06 A (+3d) | 2025-12-18 → 2026-01-29 A (+42d) | 0% → 100% | 0d → none |
| APP | **Approvals** | 2025-12-20 → 2025-12-06 (-14d) | 2026-01-01 → 2026-01-29 (+28d) |  |  |
| A1440 | Overall Layout Plan Approval | 2025-12-20 → 2025-12-06 A (-14d) | 2026-01-01 → 2026-01-29 A (+28d) | 0% → 100% | 0d → none |
| A1450 | Master Plan Approval | 2025-12-20 → 2025-12-06 A (-14d) | 2026-01-01 → 2026-01-29 A (+28d) | 0% → 100% | 0d → none |
| A1460 | Water Schedules Approval | 2025-12-20 → 2025-12-06 A (-14d) | 2026-01-01 → 2026-01-29 A (+28d) | 0% → 100% | 0d → none |
| A1470 | General Typical Plans Approval | 2025-12-20 → 2025-12-06 A (-14d) | 2026-01-01 → 2026-01-29 A (+28d) | 0% → 100% | 0d → none |
| A1480 | General Typical Details Approval | 2025-12-20 → 2025-12-06 A (-14d) | 2026-01-01 → 2026-01-29 A (+28d) | 0% → 100% | 0d → none |
| EL | **Electrical Network Drawings** | 2025-12-03 → 2025-12-06 (+3d) | 2026-01-01 → 2026-01-29 (+28d) |  |  |
| MV | **Medium Voltage** | 2025-12-03 → 2025-12-06 (+3d) | 2026-01-01 → 2026-01-29 (+28d) |  |  |
| SB | **Submittals** | 2025-12-03 → 2025-12-06 (+3d) | 2025-12-18 → 2026-01-29 (+42d) |  |  |
| A1490 | Overall Layout Plan Submittal | 2025-12-03 → 2025-12-06 A (+3d) | 2025-12-18 → 2026-01-29 A (+42d) | 0% → 100% | 0d → none |
| A1500 | Plan & Profile Submittal | 2025-12-03 → 2025-12-06 A (+3d) | 2025-12-18 → 2026-01-29 A (+42d) | 0% → 100% | 0d → none |
| A1510 | Buried trench & Duct Bank Details Submittal | 2025-12-03 → 2025-12-06 A (+3d) | 2025-12-18 → 2026-01-29 A (+42d) | 0% → 100% | 0d → none |
| A1520 | Cable Schedule Details Submittal | 2025-12-03 → 2025-12-06 A (+3d) | 2025-12-18 → 2026-01-29 A (+42d) | 0% → 100% | 0d → none |
| A1530 | Single Line Diagram Submittal | 2025-12-03 → 2025-12-06 A (+3d) | 2025-12-18 → 2026-01-29 A (+42d) | 0% → 100% | 0d → none |
| APP | **Approvals** | 2025-12-20 → 2025-12-06 (-14d) | 2026-01-01 → 2026-01-29 (+28d) |  |  |
| A1540 | Overall Layout Plan Approval | 2025-12-20 → 2025-12-06 A (-14d) | 2026-01-01 → 2026-01-29 A (+28d) | 0% → 100% | 0d → none |
| A1550 | Plan & Profile Approval | 2025-12-20 → 2025-12-06 A (-14d) | 2026-01-01 → 2026-01-29 A (+28d) | 0% → 100% | 0d → none |
| A1560 | Buried trench & Duct Bank Details Approval | 2025-12-20 → 2025-12-06 A (-14d) | 2026-01-01 → 2026-01-29 A (+28d) | 0% → 100% | 0d → none |
| A1570 | Cable Schedule Details Approval | 2025-12-20 → 2025-12-06 A (-14d) | 2026-01-01 → 2026-01-29 A (+28d) | 0% → 100% | 0d → none |
| A1580 | Single Line Diagram Approval | 2025-12-20 → 2025-12-06 A (-14d) | 2026-01-01 → 2026-01-29 A (+28d) | 0% → 100% | 0d → none |
| LV | **Low Voltage/ Street Lighting** | 2025-12-03 → 2025-12-06 (+3d) | 2026-01-01 → 2026-01-29 (+28d) |  |  |
| SB | **Submittals** | 2025-12-03 → 2025-12-06 (+3d) | 2025-12-18 → 2026-01-29 (+42d) |  |  |
| A4850 | Overall Layout Plan Submittal | 2025-12-03 → 2025-12-06 A (+3d) | 2025-12-18 → 2026-01-29 A (+42d) | 0% → 100% | 0d → none |
| A4860 | Plan & Profile Submittal | 2025-12-03 → 2025-12-06 A (+3d) | 2025-12-18 → 2026-01-29 A (+42d) | 0% → 100% | 0d → none |
| A4870 | Buried trench & Duct Bank Details Submittal | 2025-12-03 → 2025-12-06 A (+3d) | 2025-12-18 → 2026-01-29 A (+42d) | 0% → 100% | 0d → none |
| A4880 | Cable Schedule Details Submittal | 2025-12-03 → 2025-12-06 A (+3d) | 2025-12-18 → 2026-01-29 A (+42d) | 0% → 100% | 0d → none |
| A4890 | Single Line Diagram Submittal | 2025-12-03 → 2025-12-06 A (+3d) | 2025-12-18 → 2026-01-29 A (+42d) | 0% → 100% | 0d → none |
| APP | **Approvals** | 2025-12-20 → 2025-12-06 (-14d) | 2026-01-01 → 2026-01-29 (+28d) |  |  |
| A4900 | Overall Layout Plan Approval | 2025-12-20 → 2025-12-06 A (-14d) | 2026-01-01 → 2026-01-29 A (+28d) | 0% → 100% | 0d → none |
| A4910 | Plan & Profile Approval | 2025-12-20 → 2025-12-06 A (-14d) | 2026-01-01 → 2026-01-29 A (+28d) | 0% → 100% | 0d → none |
| A4920 | Buried trench & Duct Bank Details Approval | 2025-12-20 → 2025-12-06 A (-14d) | 2026-01-01 → 2026-01-29 A (+28d) | 0% → 100% | 0d → none |
| A4930 | Cable Schedule Details Approval | 2025-12-20 → 2025-12-06 A (-14d) | 2026-01-01 → 2026-01-29 A (+28d) | 0% → 100% | 0d → none |
| A4940 | Single Line Diagram Approval | 2025-12-20 → 2025-12-06 A (-14d) | 2026-01-01 → 2026-01-29 A (+28d) | 0% → 100% | 0d → none |
| ICT | **ICT Network** | 2025-12-03 → 2025-12-06 (+3d) | 2026-01-01 → 2026-01-29 (+28d) |  |  |
| SB | **Submittals** | 2025-12-03 → 2025-12-06 (+3d) | 2025-12-18 → 2026-01-29 (+42d) |  |  |
| A4950 | Overall Layout Plan Submittal | 2025-12-03 → 2025-12-06 A (+3d) | 2025-12-18 → 2026-01-29 A (+42d) | 0% → 100% | 0d → none |
| A4960 | Plan & Profile Submittal | 2025-12-03 → 2025-12-06 A (+3d) | 2025-12-18 → 2026-01-29 A (+42d) | 0% → 100% | 0d → none |
| A4970 | Buried trench & Duct Bank Details Submittal | 2025-12-03 → 2025-12-06 A (+3d) | 2025-12-18 → 2026-01-29 A (+42d) | 0% → 100% | 0d → none |
| A4980 | Cable Schedule Details Submittal | 2025-12-03 → 2025-12-06 A (+3d) | 2025-12-18 → 2026-01-29 A (+42d) | 0% → 100% | 0d → none |
| A4990 | Single Line Diagram Submittal | 2025-12-03 → 2025-12-06 A (+3d) | 2025-12-18 → 2026-01-29 A (+42d) | 0% → 100% | 0d → none |

| ID | Task | Start | Finish | Complete | Total float |
| --- | --- | --- | --- | --- | --- |
| APP | **Approvals** | 2025-12-20 → 2025-12-06 (-14d) | 2026-01-01 → 2026-01-29 (+28d) |  |  |
| A5000 | Overall Layout Plan Approval | 2025-12-20 → 2025-12-06 A (-14d) | 2026-01-01 → 2026-01-29 A (+28d) | 0% → 100% | 0d → none |
| A5010 | Plan & Profile Approval | 2025-12-20 → 2025-12-06 A (-14d) | 2026-01-01 → 2026-01-29 A (+28d) | 0% → 100% | 0d → none |
| A5020 | Buried trench & Duct Bank Details Approval | 2025-12-20 → 2025-12-06 A (-14d) | 2026-01-01 → 2026-01-29 A (+28d) | 0% → 100% | 0d → none |
| A5030 | Cable Schedule Details Approval | 2025-12-20 → 2025-12-06 A (-14d) | 2026-01-01 → 2026-01-29 A (+28d) | 0% → 100% | 0d → none |
| A5040 | Single Line Diagram Approval | 2025-12-20 → 2025-12-06 A (-14d) | 2026-01-01 → 2026-01-29 A (+28d) | 0% → 100% | 0d → none |
| ELB | **Electrical-Building** | 2025-12-03 → 2025-12-06 (+3d) | 2026-01-01 → 2026-01-29 (+28d) |  |  |
| SB | **Submittals** | 2025-12-03 → 2025-12-06 (+3d) | 2025-12-18 → 2026-01-29 (+42d) |  |  |
| A5050 | Overall Layout Plan Submittal | 2025-12-03 → 2025-12-06 A (+3d) | 2025-12-18 → 2026-01-29 A (+42d) | 0% → 100% | 0d → none |
| A5060 | Plan & Profile Submittal | 2025-12-03 → 2025-12-06 A (+3d) | 2025-12-18 → 2026-01-29 A (+42d) | 0% → 100% | 0d → none |
| A5070 | Buried trench & Duct Bank Details Submittal | 2025-12-03 → 2025-12-06 A (+3d) | 2025-12-18 → 2026-01-29 A (+42d) | 0% → 100% | 0d → none |
| A5080 | Cable Schedule Details Submittal | 2025-12-03 → 2025-12-06 A (+3d) | 2025-12-18 → 2026-01-29 A (+42d) | 0% → 100% | 0d → none |
| A5090 | Single Line Diagram Submittal | 2025-12-03 → 2025-12-06 A (+3d) | 2025-12-18 → 2026-01-29 A (+42d) | 0% → 100% | 0d → none |
| APP | **Approvals** | 2025-12-20 → 2025-12-06 (-14d) | 2026-01-01 → 2026-01-29 (+28d) |  |  |
| A5100 | Overall Layout Plan Approval | 2025-12-20 → 2025-12-06 A (-14d) | 2026-01-01 → 2026-01-29 A (+28d) | 0% → 100% | 0d → none |
| A5110 | Plan & Profile Approval | 2025-12-20 → 2025-12-06 A (-14d) | 2026-01-01 → 2026-01-29 A (+28d) | 0% → 100% | 0d → none |
| A5120 | Buried trench & Duct Bank Details Approval | 2025-12-20 → 2025-12-06 A (-14d) | 2026-01-01 → 2026-01-29 A (+28d) | 0% → 100% | 0d → none |
| A5130 | Cable Schedule Details Approval | 2025-12-20 → 2025-12-06 A (-14d) | 2026-01-01 → 2026-01-29 A (+28d) | 0% → 100% | 0d → none |
| A5140 | Single Line Diagram Approval | 2025-12-20 → 2025-12-06 A (-14d) | 2026-01-01 → 2026-01-29 A (+28d) | 0% → 100% | 0d → none |
| RD | **Road Works Drawings** | 2025-12-03 → 2025-12-06 (+3d) | 2026-01-01 → 2026-01-29 (+28d) |  |  |
| SB | **Submittals** | 2025-12-03 → 2025-12-06 (+3d) | 2025-12-18 → 2026-01-29 (+42d) |  |  |
| A1590 | Alignment & Setting Out Submittal | 2025-12-03 → 2025-12-06 A (+3d) | 2025-12-18 → 2026-01-29 A (+42d) | 0% → 100% | 0d → none |
| A1600 | Plan and Profile Submittal | 2025-12-03 → 2025-12-06 A (+3d) | 2025-12-18 → 2026-01-29 A (+42d) | 0% → 100% | 0d → none |
| A1610 | Typical Cross Sections Submittal | 2025-12-03 → 2025-12-06 A (+3d) | 2025-12-18 → 2026-01-29 A (+42d) | 0% → 100% | 0d → none |
| A1620 | Cross Sections Details Submittal | 2025-12-03 → 2025-12-06 A (+3d) | 2025-12-18 → 2026-01-29 A (+42d) | 0% → 100% | 0d → none |
| A1630 | Finish Grading Submittal | 2025-12-03 → 2025-12-06 A (+3d) | 2025-12-18 → 2026-01-29 A (+42d) | 0% → 100% | 0d → none |
| A1640 | Road Signing & Marking Roads Submittal | 2025-12-03 → 2025-12-06 A (+3d) | 2025-12-18 → 2026-01-29 A (+42d) | 0% → 100% | 0d → none |
| APP | **Approvals** | 2025-12-20 → 2025-12-06 (-14d) | 2026-01-01 → 2026-01-29 (+28d) |  |  |
| A1650 | Alignment & Setting Out Approval | 2025-12-20 → 2025-12-06 A (-14d) | 2026-01-01 → 2026-01-29 A (+28d) | 0% → 100% | 0d → none |
| A1660 | Plan & Profile Approval | 2025-12-20 → 2025-12-06 A (-14d) | 2026-01-01 → 2026-01-29 A (+28d) | 0% → 100% | 0d → none |
| A1670 | Typical Cross Sections Approval | 2025-12-20 → 2025-12-06 A (-14d) | 2026-01-01 → 2026-01-29 A (+28d) | 0% → 100% | 0d → none |
| A1680 | Cross Sections Details Approval | 2025-12-20 → 2025-12-06 A (-14d) | 2026-01-01 → 2026-01-29 A (+28d) | 0% → 100% | 0d → none |
| A1690 | Finish Grading Approval | 2025-12-20 → 2025-12-06 A (-14d) | 2026-01-01 → 2026-01-29 A (+28d) | 0% → 100% | 0d → none |
| A1700 | Road Signing & Marking Roads Approval | 2025-12-20 → 2025-12-06 A (-14d) | 2026-01-01 → 2026-01-29 A (+28d) | 0% → 100% | 0d → none |
| LS | **Landscape Works Drawings** | 2025-12-03 → 2025-12-06 (+3d) | 2026-01-01 → 2026-01-29 (+28d) |  |  |
| SB | **Submittals** | 2025-12-03 → 2025-12-06 (+3d) | 2025-12-18 → 2026-01-29 (+42d) |  |  |
| A1710 | Hardscape Plans Landscape Submittal | 2025-12-03 → 2025-12-06 A (+3d) | 2025-12-18 → 2026-01-29 A (+42d) | 0% → 100% | 0d → none |
| A1720 | Softscape Plans Landscape Submittal | 2025-12-03 → 2025-12-06 A (+3d) | 2025-12-18 → 2026-01-29 A (+42d) | 0% → 100% | 0d → none |
| A1730 | Details Plans Landscape Submittal | 2025-12-03 → 2025-12-06 A (+3d) | 2025-12-18 → 2026-01-29 A (+42d) | 0% → 100% | 0d → none |
| A1740 | Schedules Plans Landscape Submittal | 2025-12-03 → 2025-12-06 A (+3d) | 2025-12-18 → 2026-01-29 A (+42d) | 0% → 100% | 0d → none |
| A1750 | Lighting Plans Landscape Submittal | 2025-12-03 → 2025-12-06 A (+3d) | 2025-12-18 → 2026-01-29 A (+42d) | 0% → 100% | 0d → none |
| APP | **Approvals** | 2025-12-20 → 2025-12-06 (-14d) | 2026-01-01 → 2026-01-29 (+28d) |  |  |
| A1760 | Hardscape Plans Landscape Approval | 2025-12-20 → 2025-12-06 A (-14d) | 2026-01-01 → 2026-01-29 A (+28d) | 0% → 100% | 0d → none |
| A1770 | Softscape Plans Landscape Approval | 2025-12-20 → 2025-12-06 A (-14d) | 2026-01-01 → 2026-01-29 A (+28d) | 0% → 100% | 0d → none |
| A1780 | Details Plans Landscape Approval | 2025-12-20 → 2025-12-06 A (-14d) | 2026-01-01 → 2026-01-29 A (+28d) | 0% → 100% | 0d → none |
| A1790 | Schedules Plans Landscape Approval | 2025-12-20 → 2025-12-06 A (-14d) | 2026-01-01 → 2026-01-29 A (+28d) | 0% → 100% | 0d → none |
| A1800 | Lighting Plans Landscape Approval | 2025-12-20 → 2025-12-06 A (-14d) | 2026-01-01 → 2026-01-29 A (+28d) | 0% → 100% | 0d → none |
| ZN2 | **Zone B** | 2025-12-03 → 2025-12-06 (+3d) | 2026-01-01 → 2026-01-29 (+28d) |  |  |
| EW | **Earth Work** | 2025-12-03 → 2025-12-06 (+3d) | 2026-01-01 → 2026-01-29 (+28d) |  |  |
| SB | **Submittals** | 2025-12-03 → 2025-12-06 (+3d) | 2025-12-18 → 2026-01-29 (+42d) |  |  |
| A1810 | NGL Submittal | 2025-12-03 → 2025-12-06 A (+3d) | 2025-12-18 → 2026-01-29 A (+42d) | 0% → 100% | 0d → none |
| APP | **Approvals** | 2025-12-20 → 2025-12-06 (-14d) | 2026-01-01 → 2026-01-29 (+28d) |  |  |
| A1870 | NGL Approval | 2025-12-20 → 2025-12-06 A (-14d) | 2026-01-01 → 2026-01-29 A (+28d) | 0% → 100% | 0d → none |
| ST | **Storm Network Drawings** | 2025-12-03 → 2025-12-06 (+3d) | 2026-01-01 → 2026-01-29 (+28d) |  |  |
| SB | **Submittals** | 2025-12-03 → 2025-12-06 (+3d) | 2025-12-18 → 2026-01-29 (+42d) |  |  |
| A1820 | Overall Layout Plan Submittal | 2025-12-03 → 2025-12-06 A (+3d) | 2025-12-18 → 2026-01-29 A (+42d) | 0% → 100% | 0d → none |
| A1830 | Plan & Profiles Submittal | 2025-12-03 → 2025-12-06 A (+3d) | 2025-12-18 → 2026-01-29 A (+42d) | 0% → 100% | 0d → none |
| A1840 | General Typical Plans Submittal | 2025-12-03 → 2025-12-06 A (+3d) | 2025-12-18 → 2026-01-29 A (+42d) | 0% → 100% | 0d → none |
| A1850 | Storm Tie - In Details Submittal | 2025-12-03 → 2025-12-06 A (+3d) | 2025-12-18 → 2026-01-29 A (+42d) | 0% → 100% | 0d → none |
| A1860 | Chamber Details Submittal | 2025-12-03 → 2025-12-06 A (+3d) | 2025-12-18 → 2026-01-29 A (+42d) | 0% → 100% | 0d → none |
| APP | **Approvals** | 2025-12-20 → 2025-12-06 (-14d) | 2026-01-01 → 2026-01-29 (+28d) |  |  |
| A1880 | Overall Layout Plan Approval | 2025-12-20 → 2025-12-06 A (-14d) | 2026-01-01 → 2026-01-29 A (+28d) | 0% → 100% | 0d → none |
| A1890 | Plan & Profiles Approval | 2025-12-20 → 2025-12-06 A (-14d) | 2026-01-01 → 2026-01-29 A (+28d) | 0% → 100% | 0d → none |
| A1900 | General Typical Plans Approval | 2025-12-20 → 2025-12-06 A (-14d) | 2026-01-01 → 2026-01-29 A (+28d) | 0% → 100% | 0d → none |
| A1910 | Storm Tie - In Details Approval | 2025-12-20 → 2025-12-06 A (-14d) | 2026-01-01 → 2026-01-29 A (+28d) | 0% → 100% | 0d → none |
| A1920 | Chamber Details Approval | 2025-12-20 → 2025-12-06 A (-14d) | 2026-01-01 → 2026-01-29 A (+28d) | 0% → 100% | 0d → none |
| SW | **Sewage Network Drawings** | 2025-12-03 → 2025-12-06 (+3d) | 2026-01-01 → 2026-01-29 (+28d) |  |  |
| SB | **Submittals** | 2025-12-03 → 2025-12-06 (+3d) | 2025-12-18 → 2026-01-29 (+42d) |  |  |
| A1930 | Overall Layout Plan Submittal | 2025-12-03 → 2025-12-06 A (+3d) | 2025-12-18 → 2026-01-29 A (+42d) | 0% → 100% | 0d → none |
| A1940 | Plan & Profiles Submittal | 2025-12-03 → 2025-12-06 A (+3d) | 2025-12-18 → 2026-01-29 A (+42d) | 0% → 100% | 0d → none |

| ID | Task | Start | Finish | Complete | Total float |
| --- | --- | --- | --- | --- | --- |
| A1950 | General Typical Plans Submittal | 2025-12-03 → 2025-12-06 A (+3d) | 2025-12-18 → 2026-01-29 A (+42d) | 0% → 100% | 0d → none |
| A1960 | Sewage Tie - In Details Submittal | 2025-12-03 → 2025-12-06 A (+3d) | 2025-12-18 → 2026-01-29 A (+42d) | 0% → 100% | 0d → none |
| A1970 | Chamber Details Submittal | 2025-12-03 → 2025-12-06 A (+3d) | 2025-12-18 → 2026-01-29 A (+42d) | 0% → 100% | 0d → none |
| APP | **Approvals** | 2025-12-20 → 2025-12-06 (-14d) | 2026-01-01 → 2026-01-29 (+28d) |  |  |
| A1980 | Overall Layout Plan Approval | 2025-12-20 → 2025-12-06 A (-14d) | 2026-01-01 → 2026-01-29 A (+28d) | 0% → 100% | 0d → none |
| A1990 | Plan & Profiles Approval | 2025-12-20 → 2025-12-06 A (-14d) | 2026-01-01 → 2026-01-29 A (+28d) | 0% → 100% | 0d → none |
| A2000 | General Typical Plans Approval | 2025-12-20 → 2025-12-06 A (-14d) | 2026-01-01 → 2026-01-29 A (+28d) | 0% → 100% | 0d → none |
| A2010 | Sewage Tie - In Details Approval | 2025-12-20 → 2025-12-06 A (-14d) | 2026-01-01 → 2026-01-29 A (+28d) | 0% → 100% | 0d → none |
| A2020 | Chamber Details Approval | 2025-12-20 → 2025-12-06 A (-14d) | 2026-01-01 → 2026-01-29 A (+28d) | 0% → 100% | 0d → none |
| BC | **Box Culverts** | 2025-12-03 → 2025-12-06 (+3d) | 2026-01-01 → 2026-01-29 (+28d) |  |  |
| SB | **Submittals** | 2025-12-03 → 2025-12-06 (+3d) | 2025-12-18 → 2026-01-29 (+42d) |  |  |
| A2030 | Setting out Layout Submittal | 2025-12-03 → 2025-12-06 A (+3d) | 2025-12-18 → 2026-01-29 A (+42d) | 0% → 100% | 0d → none |
| A2040 | Typical Details Submittal | 2025-12-03 → 2025-12-06 A (+3d) | 2025-12-18 → 2026-01-29 A (+42d) | 0% → 100% | 0d → none |
| A2050 | Concrete Dim.& Reinforcement details Submittal | 2025-12-03 → 2025-12-06 A (+3d) | 2025-12-18 → 2026-01-29 A (+42d) | 0% → 100% | 0d → none |
| APP | **Approvals** | 2025-12-20 → 2025-12-06 (-14d) | 2026-01-01 → 2026-01-29 (+28d) |  |  |
| A2060 | Setting out Layout Approval | 2025-12-20 → 2025-12-06 A (-14d) | 2026-01-01 → 2026-01-29 A (+28d) | 0% → 100% | 0d → none |
| A2070 | Typical Details Approval | 2025-12-20 → 2025-12-06 A (-14d) | 2026-01-01 → 2026-01-29 A (+28d) | 0% → 100% | 0d → none |
| A2080 | Concrete Dim.& Reinforcement details Approval | 2025-12-20 → 2025-12-06 A (-14d) | 2026-01-01 → 2026-01-29 A (+28d) | 0% → 100% | 0d → none |
| PT | **Potable Network Drawings** | 2025-12-03 → 2025-12-06 (+3d) | 2026-01-01 → 2026-01-29 (+28d) |  |  |
| SB | **Submittals** | 2025-12-03 → 2025-12-06 (+3d) | 2025-12-18 → 2026-01-29 (+42d) |  |  |
| A2090 | Overall Layout Plan Submittal | 2025-12-03 → 2025-12-06 A (+3d) | 2025-12-18 → 2026-01-29 A (+42d) | 0% → 100% | 0d → none |
| A2100 | Master Plan Submittal | 2025-12-03 → 2025-12-06 A (+3d) | 2025-12-18 → 2026-01-29 A (+42d) | 0% → 100% | 0d → none |
| A2110 | Water Schedules Submittal | 2025-12-03 → 2025-12-06 A (+3d) | 2025-12-18 → 2026-01-29 A (+42d) | 0% → 100% | 0d → none |
| A2120 | General Typical Plans Submittal | 2025-12-03 → 2025-12-06 A (+3d) | 2025-12-18 → 2026-01-29 A (+42d) | 0% → 100% | 0d → none |
| A2130 | General Typical Details Submittal | 2025-12-03 → 2025-12-06 A (+3d) | 2025-12-18 → 2026-01-29 A (+42d) | 0% → 100% | 0d → none |
| APP | **Approvals** | 2025-12-20 → 2025-12-06 (-14d) | 2026-01-01 → 2026-01-29 (+28d) |  |  |
| A2140 | Overall Layout Plan Approval | 2025-12-20 → 2025-12-06 A (-14d) | 2026-01-01 → 2026-01-29 A (+28d) | 0% → 100% | 0d → none |
| A2150 | Master Plan Approval | 2025-12-20 → 2025-12-06 A (-14d) | 2026-01-01 → 2026-01-29 A (+28d) | 0% → 100% | 0d → none |
| A2160 | Water Schedules Approval | 2025-12-20 → 2025-12-06 A (-14d) | 2026-01-01 → 2026-01-29 A (+28d) | 0% → 100% | 0d → none |
| A2170 | General Typical Plans Approval | 2025-12-20 → 2025-12-06 A (-14d) | 2026-01-01 → 2026-01-29 A (+28d) | 0% → 100% | 0d → none |
| A2180 | General Typical Details Approval | 2025-12-20 → 2025-12-06 A (-14d) | 2026-01-01 → 2026-01-29 A (+28d) | 0% → 100% | 0d → none |
| IR | **Irrigation Network Drawings** | 2025-12-03 → 2025-12-06 (+3d) | 2026-01-01 → 2026-01-29 (+28d) |  |  |
| SB | **Submittals** | 2025-12-03 → 2025-12-06 (+3d) | 2025-12-18 → 2026-01-29 (+42d) |  |  |
| A2190 | Overall Layout Plan Submittal | 2025-12-03 → 2025-12-06 A (+3d) | 2025-12-18 → 2026-01-29 A (+42d) | 0% → 100% | 0d → none |
| A2200 | Master Plan Submittal | 2025-12-03 → 2025-12-06 A (+3d) | 2025-12-18 → 2026-01-29 A (+42d) | 0% → 100% | 0d → none |
| A2210 | Water Schedules Submittal | 2025-12-03 → 2025-12-06 A (+3d) | 2025-12-18 → 2026-01-29 A (+42d) | 0% → 100% | 0d → none |
| A2220 | General Typical Plans Submittal | 2025-12-03 → 2025-12-06 A (+3d) | 2025-12-18 → 2026-01-29 A (+42d) | 0% → 100% | 0d → none |
| A2230 | General Typical Details Submittal | 2025-12-03 → 2025-12-06 A (+3d) | 2025-12-18 → 2026-01-29 A (+42d) | 0% → 100% | 0d → none |
| APP | **Approvals** | 2025-12-20 → 2025-12-06 (-14d) | 2026-01-01 → 2026-01-29 (+28d) |  |  |
| A2240 | Overall Layout Plan Approval | 2025-12-20 → 2025-12-06 A (-14d) | 2026-01-01 → 2026-01-29 A (+28d) | 0% → 100% | 0d → none |
| A2250 | Master Plan Approval | 2025-12-20 → 2025-12-06 A (-14d) | 2026-01-01 → 2026-01-29 A (+28d) | 0% → 100% | 0d → none |
| A2260 | Water Schedules Approval | 2025-12-20 → 2025-12-06 A (-14d) | 2026-01-01 → 2026-01-29 A (+28d) | 0% → 100% | 0d → none |
| A2270 | General Typical Plans Approval | 2025-12-20 → 2025-12-06 A (-14d) | 2026-01-01 → 2026-01-29 A (+28d) | 0% → 100% | 0d → none |
| A2280 | General Typical Details Approval | 2025-12-20 → 2025-12-06 A (-14d) | 2026-01-01 → 2026-01-29 A (+28d) | 0% → 100% | 0d → none |
| EL | **Electrical Network Drawings** | 2025-12-03 → 2025-12-06 (+3d) | 2026-01-01 → 2026-01-29 (+28d) |  |  |
| 1 | **Medium Voltage** | 2025-12-03 → 2025-12-06 (+3d) | 2026-01-01 → 2026-01-29 (+28d) |  |  |
| SB | **Submittals** | 2025-12-03 → 2025-12-06 (+3d) | 2025-12-18 → 2026-01-29 (+42d) |  |  |
| A2290 | Overall Layout Plan Submittal | 2025-12-03 → 2025-12-06 A (+3d) | 2025-12-18 → 2026-01-29 A (+42d) | 0% → 100% | 0d → none |
| A2300 | Plan & Profile Submittal | 2025-12-03 → 2025-12-06 A (+3d) | 2025-12-18 → 2026-01-29 A (+42d) | 0% → 100% | 0d → none |
| A2310 | Buried trench & Duct Bank Details Submittal | 2025-12-03 → 2025-12-06 A (+3d) | 2025-12-18 → 2026-01-29 A (+42d) | 0% → 100% | 0d → none |
| A2320 | Cable Schedule Details Submittal | 2025-12-03 → 2025-12-06 A (+3d) | 2025-12-18 → 2026-01-29 A (+42d) | 0% → 100% | 0d → none |
| A2330 | Single Line Diagram Submittal | 2025-12-03 → 2025-12-06 A (+3d) | 2025-12-18 → 2026-01-29 A (+42d) | 0% → 100% | 0d → none |
| APP | **Approvals** | 2025-12-20 → 2025-12-06 (-14d) | 2026-01-01 → 2026-01-29 (+28d) |  |  |
| A2340 | Overall Layout Plan Approval | 2025-12-20 → 2025-12-06 A (-14d) | 2026-01-01 → 2026-01-29 A (+28d) | 0% → 100% | 0d → none |
| A2350 | Plan & Profile Approval | 2025-12-20 → 2025-12-06 A (-14d) | 2026-01-01 → 2026-01-29 A (+28d) | 0% → 100% | 0d → none |
| A2360 | Buried trench & Duct Bank Details Approval | 2025-12-20 → 2025-12-06 A (-14d) | 2026-01-01 → 2026-01-29 A (+28d) | 0% → 100% | 0d → none |
| A2370 | Cable Schedule Details Approval | 2025-12-20 → 2025-12-06 A (-14d) | 2026-01-01 → 2026-01-29 A (+28d) | 0% → 100% | 0d → none |
| A2380 | Single Line Diagram Approval | 2025-12-20 → 2025-12-06 A (-14d) | 2026-01-01 → 2026-01-29 A (+28d) | 0% → 100% | 0d → none |
| LV | **Low Voltage/ Street Lighting** | 2025-12-03 → 2025-12-06 (+3d) | 2026-01-01 → 2026-01-29 (+28d) |  |  |
| SB | **Submittals** | 2025-12-03 → 2025-12-06 (+3d) | 2025-12-18 → 2026-01-29 (+42d) |  |  |
| A5150 | Overall Layout Plan Submittal | 2025-12-03 → 2025-12-06 A (+3d) | 2025-12-18 → 2026-01-29 A (+42d) | 0% → 100% | 0d → none |
| A5160 | Plan & Profile Submittal | 2025-12-03 → 2025-12-06 A (+3d) | 2025-12-18 → 2026-01-29 A (+42d) | 0% → 100% | 0d → none |
| A5170 | Buried trench & Duct Bank Details Submittal | 2025-12-03 → 2025-12-06 A (+3d) | 2025-12-18 → 2026-01-29 A (+42d) | 0% → 100% | 0d → none |
| A5180 | Cable Schedule Details Submittal | 2025-12-03 → 2025-12-06 A (+3d) | 2025-12-18 → 2026-01-29 A (+42d) | 0% → 100% | 0d → none |
| A5190 | Single Line Diagram Submittal | 2025-12-03 → 2025-12-06 A (+3d) | 2025-12-18 → 2026-01-29 A (+42d) | 0% → 100% | 0d → none |
| APP | **Approvals** | 2025-12-20 → 2025-12-06 (-14d) | 2026-01-01 → 2026-01-29 (+28d) |  |  |
| A5200 | Overall Layout Plan Approval | 2025-12-20 → 2025-12-06 A (-14d) | 2026-01-01 → 2026-01-29 A (+28d) | 0% → 100% | 0d → none |
| A5210 | Plan & Profile Approval | 2025-12-20 → 2025-12-06 A (-14d) | 2026-01-01 → 2026-01-29 A (+28d) | 0% → 100% | 0d → none |
| A5220 | Buried trench & Duct Bank Details Approval | 2025-12-20 → 2025-12-06 A (-14d) | 2026-01-01 → 2026-01-29 A (+28d) | 0% → 100% | 0d → none |
| A5230 | Cable Schedule Details Approval | 2025-12-20 → 2025-12-06 A (-14d) | 2026-01-01 → 2026-01-29 A (+28d) | 0% → 100% | 0d → none |

| ID | Task | Start | Finish | Complete | Total float |
| --- | --- | --- | --- | --- | --- |
| A5240 | Single Line Diagram Approval | 2025-12-20 → 2025-12-06 A (-14d) | 2026-01-01 → 2026-01-29 A (+28d) | 0% → 100% | 0d → none |
| LV1 | **ICT Network** | 2025-12-03 → 2025-12-06 (+3d) | 2026-01-01 → 2026-01-29 (+28d) |  |  |
| SB | **Submittals** | 2025-12-03 → 2025-12-06 (+3d) | 2025-12-18 → 2026-01-29 (+42d) |  |  |
| A5250 | Overall Layout Plan Submittal | 2025-12-03 → 2025-12-06 A (+3d) | 2025-12-18 → 2026-01-29 A (+42d) | 0% → 100% | 0d → none |
| A5260 | Plan & Profile Submittal | 2025-12-03 → 2025-12-06 A (+3d) | 2025-12-18 → 2026-01-29 A (+42d) | 0% → 100% | 0d → none |
| A5270 | Buried trench & Duct Bank Details Submittal | 2025-12-03 → 2025-12-06 A (+3d) | 2025-12-18 → 2026-01-29 A (+42d) | 0% → 100% | 0d → none |
| A5280 | Cable Schedule Details Submittal | 2025-12-03 → 2025-12-06 A (+3d) | 2025-12-18 → 2026-01-29 A (+42d) | 0% → 100% | 0d → none |
| A5290 | Single Line Diagram Submittal | 2025-12-03 → 2025-12-06 A (+3d) | 2025-12-18 → 2026-01-29 A (+42d) | 0% → 100% | 0d → none |
| APP | **Approvals** | 2025-12-20 → 2025-12-06 (-14d) | 2026-01-01 → 2026-01-29 (+28d) |  |  |
| A5300 | Overall Layout Plan Approval | 2025-12-20 → 2025-12-06 A (-14d) | 2026-01-01 → 2026-01-29 A (+28d) | 0% → 100% | 0d → none |
| A5310 | Plan & Profile Approval | 2025-12-20 → 2025-12-06 A (-14d) | 2026-01-01 → 2026-01-29 A (+28d) | 0% → 100% | 0d → none |
| A5320 | Buried trench & Duct Bank Details Approval | 2025-12-20 → 2025-12-06 A (-14d) | 2026-01-01 → 2026-01-29 A (+28d) | 0% → 100% | 0d → none |
| A5330 | Cable Schedule Details Approval | 2025-12-20 → 2025-12-06 A (-14d) | 2026-01-01 → 2026-01-29 A (+28d) | 0% → 100% | 0d → none |
| A5340 | Single Line Diagram Approval | 2025-12-20 → 2025-12-06 A (-14d) | 2026-01-01 → 2026-01-29 A (+28d) | 0% → 100% | 0d → none |
| LV11 | **Electrical-Building** | 2025-12-03 → 2025-12-06 (+3d) | 2026-01-01 → 2026-01-29 (+28d) |  |  |
| SB | **Submittals** | 2025-12-03 → 2025-12-06 (+3d) | 2025-12-18 → 2026-01-29 (+42d) |  |  |
| A5350 | Overall Layout Plan Submittal | 2025-12-03 → 2025-12-06 A (+3d) | 2025-12-18 → 2026-01-29 A (+42d) | 0% → 100% | 0d → none |
| A5360 | Plan & Profile Submittal | 2025-12-03 → 2025-12-06 A (+3d) | 2025-12-18 → 2026-01-29 A (+42d) | 0% → 100% | 0d → none |
| A5370 | Buried trench & Duct Bank Details Submittal | 2025-12-03 → 2025-12-06 A (+3d) | 2025-12-18 → 2026-01-29 A (+42d) | 0% → 100% | 0d → none |
| A5380 | Cable Schedule Details Submittal | 2025-12-03 → 2025-12-06 A (+3d) | 2025-12-18 → 2026-01-29 A (+42d) | 0% → 100% | 0d → none |
| A5390 | Single Line Diagram Submittal | 2025-12-03 → 2025-12-06 A (+3d) | 2025-12-18 → 2026-01-29 A (+42d) | 0% → 100% | 0d → none |
| APP | **Approvals** | 2025-12-20 → 2025-12-06 (-14d) | 2026-01-01 → 2026-01-29 (+28d) |  |  |
| A5400 | Overall Layout Plan Approval | 2025-12-20 → 2025-12-06 A (-14d) | 2026-01-01 → 2026-01-29 A (+28d) | 0% → 100% | 0d → none |
| A5410 | Plan & Profile Approval | 2025-12-20 → 2025-12-06 A (-14d) | 2026-01-01 → 2026-01-29 A (+28d) | 0% → 100% | 0d → none |
| A5420 | Buried trench & Duct Bank Details Approval | 2025-12-20 → 2025-12-06 A (-14d) | 2026-01-01 → 2026-01-29 A (+28d) | 0% → 100% | 0d → none |
| A5430 | Cable Schedule Details Approval | 2025-12-20 → 2025-12-06 A (-14d) | 2026-01-01 → 2026-01-29 A (+28d) | 0% → 100% | 0d → none |
| A5440 | Single Line Diagram Approval | 2025-12-20 → 2025-12-06 A (-14d) | 2026-01-01 → 2026-01-29 A (+28d) | 0% → 100% | 0d → none |
| RD | **Road Works Drawings** | 2025-12-03 → 2025-12-06 (+3d) | 2026-01-01 → 2026-01-29 (+28d) |  |  |
| SB | **Submittals** | 2025-12-03 → 2025-12-06 (+3d) | 2025-12-18 → 2026-01-29 (+42d) |  |  |
| A2390 | Alignment & Setting Out Submittal | 2025-12-03 → 2025-12-06 A (+3d) | 2025-12-18 → 2026-01-29 A (+42d) | 0% → 100% | 0d → none |
| A2400 | Plan and Profile Submittal | 2025-12-03 → 2025-12-06 A (+3d) | 2025-12-18 → 2026-01-29 A (+42d) | 0% → 100% | 0d → none |
| A2410 | Typical Cross Sections Submittal | 2025-12-03 → 2025-12-06 A (+3d) | 2025-12-18 → 2026-01-29 A (+42d) | 0% → 100% | 0d → none |
| A2420 | Cross Sections Details Submittal | 2025-12-03 → 2025-12-06 A (+3d) | 2025-12-18 → 2026-01-29 A (+42d) | 0% → 100% | 0d → none |
| A2430 | Finish Grading Submittal | 2025-12-03 → 2025-12-06 A (+3d) | 2025-12-18 → 2026-01-29 A (+42d) | 0% → 100% | 0d → none |
| A2490 | Road Signing & Marking Roads Submittal | 2025-12-03 → 2025-12-06 A (+3d) | 2025-12-18 → 2026-01-29 A (+42d) | 0% → 100% | 0d → none |
| APP | **Approvals** | 2025-12-20 → 2025-12-06 (-14d) | 2026-01-01 → 2026-01-29 (+28d) |  |  |
| A2440 | Alignment & Setting Out Approval | 2025-12-20 → 2025-12-06 A (-14d) | 2026-01-01 → 2026-01-29 A (+28d) | 0% → 100% | 0d → none |
| A2450 | Plan & Profile Approval | 2025-12-20 → 2025-12-06 A (-14d) | 2026-01-01 → 2026-01-29 A (+28d) | 0% → 100% | 0d → none |
| A2460 | Typical Cross Sections Approval | 2025-12-20 → 2025-12-06 A (-14d) | 2026-01-01 → 2026-01-29 A (+28d) | 0% → 100% | 0d → none |
| A2470 | Cross Sections Details Approval | 2025-12-20 → 2025-12-06 A (-14d) | 2026-01-01 → 2026-01-29 A (+28d) | 0% → 100% | 0d → none |
| A2480 | Finish Grading Approval | 2025-12-20 → 2025-12-06 A (-14d) | 2026-01-01 → 2026-01-29 A (+28d) | 0% → 100% | 0d → none |
| A2500 | Road Signing & Marking Roads Approval | 2025-12-20 → 2025-12-06 A (-14d) | 2026-01-01 → 2026-01-29 A (+28d) | 0% → 100% | 0d → none |
| LS | **Landscape Works Drawings** | 2025-12-03 → 2025-12-06 (+3d) | 2026-01-01 → 2026-01-29 (+28d) |  |  |
| SB | **Submittals** | 2025-12-03 → 2025-12-06 (+3d) | 2025-12-18 → 2026-01-29 (+42d) |  |  |
| A2510 | Hardscape Plans Landscape Submittal | 2025-12-03 → 2025-12-06 A (+3d) | 2025-12-18 → 2026-01-29 A (+42d) | 0% → 100% | 0d → none |
| A2520 | Softscape Plans Landscape Submittal | 2025-12-03 → 2025-12-06 A (+3d) | 2025-12-18 → 2026-01-29 A (+42d) | 0% → 100% | 0d → none |
| A2530 | Details Plans Landscape Submittal | 2025-12-03 → 2025-12-06 A (+3d) | 2025-12-18 → 2026-01-29 A (+42d) | 0% → 100% | 0d → none |
| A2540 | Schedules Plans Landscape Submittal | 2025-12-03 → 2025-12-06 A (+3d) | 2025-12-18 → 2026-01-29 A (+42d) | 0% → 100% | 0d → none |
| A2550 | Lighting Plans Landscape Submittal | 2025-12-03 → 2025-12-06 A (+3d) | 2025-12-18 → 2026-01-29 A (+42d) | 0% → 100% | 0d → none |
| APP | **Approvals** | 2025-12-20 → 2025-12-06 (-14d) | 2026-01-01 → 2026-01-29 (+28d) |  |  |
| A2560 | Hardscape Plans Landscape Approval | 2025-12-20 → 2025-12-06 A (-14d) | 2026-01-01 → 2026-01-29 A (+28d) | 0% → 100% | 0d → none |
| A2570 | Softscape Plans Landscape Approval | 2025-12-20 → 2025-12-06 A (-14d) | 2026-01-01 → 2026-01-29 A (+28d) | 0% → 100% | 0d → none |
| A2580 | Details Plans Landscape Approval | 2025-12-20 → 2025-12-06 A (-14d) | 2026-01-01 → 2026-01-29 A (+28d) | 0% → 100% | 0d → none |
| A2590 | Schedules Plans Landscape Approval | 2025-12-20 → 2025-12-06 A (-14d) | 2026-01-01 → 2026-01-29 A (+28d) | 0% → 100% | 0d → none |
| A2600 | Lighting Plans Landscape Approval | 2025-12-20 → 2025-12-06 A (-14d) | 2026-01-01 → 2026-01-29 A (+28d) | 0% → 100% | 0d → none |
| ZN3 | **Labor Camp** | 2025-12-03 → 2025-12-06 (+3d) | 2026-01-01 → 2026-01-29 (+28d) |  |  |
| EW | **Earth Work** | 2025-12-03 → 2025-12-06 (+3d) | 2026-01-01 → 2026-01-29 (+28d) |  |  |
| SB | **Submittals** | 2025-12-03 → 2025-12-06 (+3d) | 2025-12-18 → 2026-01-29 (+42d) |  |  |
| A2610 | NGL Submittal | 2025-12-03 → 2025-12-06 A (+3d) | 2025-12-18 → 2026-01-29 A (+42d) | 0% → 100% | 0d → none |
| APP | **Approvals** | 2025-12-20 → 2025-12-06 (-14d) | 2026-01-01 → 2026-01-29 (+28d) |  |  |
| A2620 | NGL Approval | 2025-12-20 → 2025-12-06 A (-14d) | 2026-01-01 → 2026-01-29 A (+28d) | 0% → 100% | 0d → none |
| RD | **Road Works Drawings** | 2025-12-03 → 2025-12-06 (+3d) | 2026-01-01 → 2026-01-29 (+28d) |  |  |
| SB | **Submittals** | 2025-12-03 → 2025-12-06 (+3d) | 2025-12-18 → 2026-01-29 (+42d) |  |  |
| A2630 | Alignment & Setting Out Submittal | 2025-12-03 → 2025-12-06 A (+3d) | 2025-12-18 → 2026-01-29 A (+42d) | 0% → 100% | 0d → none |
| A2640 | Plan and Profile Submittal | 2025-12-03 → 2025-12-06 A (+3d) | 2025-12-18 → 2026-01-29 A (+42d) | 0% → 100% | 0d → none |
| A2650 | Typical Cross Sections Submittal | 2025-12-03 → 2025-12-06 A (+3d) | 2025-12-18 → 2026-01-29 A (+42d) | 0% → 100% | 0d → none |
| A2660 | Cross Sections Details Submittal | 2025-12-03 → 2025-12-06 A (+3d) | 2025-12-18 → 2026-01-29 A (+42d) | 0% → 100% | 0d → none |
| A2670 | Finish Grading Submittal | 2025-12-03 → 2025-12-06 A (+3d) | 2025-12-18 → 2026-01-29 A (+42d) | 0% → 100% | 0d → none |
| A2730 | Road Signing & Marking Roads Submittal | 2025-12-03 → 2025-12-06 A (+3d) | 2025-12-18 → 2026-01-29 A (+42d) | 0% → 100% | 0d → none |
| APP | **Approvals** | 2025-12-20 → 2025-12-06 (-14d) | 2026-01-01 → 2026-01-29 (+28d) |  |  |

| ID | Task | Start | Finish | Complete | Total float |
| --- | --- | --- | --- | --- | --- |
| A2680 | Alignment & Setting Out Approval | 2025-12-20 → 2025-12-06 A (-14d) | 2026-01-01 → 2026-01-29 A (+28d) | 0% → 100% | 0d → none |
| A2690 | Plan & Profile Approval | 2025-12-20 → 2025-12-06 A (-14d) | 2026-01-01 → 2026-01-29 A (+28d) | 0% → 100% | 0d → none |
| A2700 | Typical Cross Sections Approval | 2025-12-20 → 2025-12-06 A (-14d) | 2026-01-01 → 2026-01-29 A (+28d) | 0% → 100% | 0d → none |
| A2710 | Cross Sections Details Approval | 2025-12-20 → 2025-12-06 A (-14d) | 2026-01-01 → 2026-01-29 A (+28d) | 0% → 100% | 0d → none |
| A2720 | Finish Grading Approval | 2025-12-20 → 2025-12-06 A (-14d) | 2026-01-01 → 2026-01-29 A (+28d) | 0% → 100% | 0d → none |
| A2740 | Road Signing & Marking Roads Approval | 2025-12-20 → 2025-12-06 A (-14d) | 2026-01-01 → 2026-01-29 A (+28d) | 0% → 100% | 0d → none |
| ZN4 | **Mosque** | 2025-12-03 → 2025-12-06 (+3d) | 2026-01-01 → 2026-01-29 (+28d) |  |  |
| EW | **Earth Work** | 2025-12-03 → 2025-12-06 (+3d) | 2026-01-01 → 2026-01-29 (+28d) |  |  |
| SB | **Submittals** | 2025-12-03 → 2025-12-06 (+3d) | 2025-12-18 → 2026-01-29 (+42d) |  |  |
| A2750 | NGL Submittal | 2025-12-03 → 2025-12-06 A (+3d) | 2025-12-18 → 2026-01-29 A (+42d) | 0% → 100% | 0d → none |
| APP | **Approvals** | 2025-12-20 → 2025-12-06 (-14d) | 2026-01-01 → 2026-01-29 (+28d) |  |  |
| A2760 | NGL Approval | 2025-12-20 → 2025-12-06 A (-14d) | 2026-01-01 → 2026-01-29 A (+28d) | 0% → 100% | 0d → none |
| SC | **Structural Work Drawings** | 2025-12-03 → 2025-12-06 (+3d) | 2026-01-01 → 2026-01-29 (+28d) |  |  |
| SB | **Submittals** | 2025-12-03 → 2025-12-06 (+3d) | 2025-12-18 → 2026-01-29 (+42d) |  |  |
| A2770 | Wet Utilities Drawings Submittal | 2025-12-03 → 2025-12-06 A (+3d) | 2025-12-18 → 2026-01-29 A (+42d) | 0% → 100% | 0d → none |
| A2780 | Dry Utilities Drawings Submittal | 2025-12-03 → 2025-12-06 A (+3d) | 2025-12-18 → 2026-01-29 A (+42d) | 0% → 100% | 0d → none |
| A2790 | Civil Works Drawings Submittal | 2025-12-03 → 2025-12-06 A (+3d) | 2025-12-18 → 2026-01-29 A (+42d) | 0% → 100% | 0d → none |
| A2800 | Arch. Works Drawings Submittal | 2025-12-03 → 2025-12-06 A (+3d) | 2025-12-18 → 2026-01-29 A (+42d) | 0% → 100% | 0d → none |
| A2810 | MEP Works Drawings Submittal | 2025-12-03 → 2025-12-06 A (+3d) | 2025-12-18 → 2026-01-29 A (+42d) | 0% → 100% | 0d → none |
| APP | **Approvals** | 2025-12-20 → 2025-12-06 (-14d) | 2026-01-01 → 2026-01-29 (+28d) |  |  |
| A2820 | Wet Utilities Drawings Approval | 2025-12-20 → 2025-12-06 A (-14d) | 2026-01-01 → 2026-01-29 A (+28d) | 0% → 100% | 0d → none |
| A2830 | Dry Utilities Drawings Approval | 2025-12-20 → 2025-12-06 A (-14d) | 2026-01-01 → 2026-01-29 A (+28d) | 0% → 100% | 0d → none |
| A2840 | Civil Works Drawings Approvalal | 2025-12-20 → 2025-12-06 A (-14d) | 2026-01-01 → 2026-01-29 A (+28d) | 0% → 100% | 0d → none |
| A2850 | Arch. Works Drawings Approval | 2025-12-20 → 2025-12-06 A (-14d) | 2026-01-01 → 2026-01-29 A (+28d) | 0% → 100% | 0d → none |
| A2860 | MEP Works Drawings Approval | 2025-12-20 → 2025-12-06 A (-14d) | 2026-01-01 → 2026-01-29 A (+28d) | 0% → 100% | 0d → none |
| 1 | **Portable Capins** | 2025-12-03 → 2025-12-06 (+3d) | 2026-01-01 → 2026-09-28 (+270d) |  |  |
| 1 | **Submittals** | 2025-12-03 → 2025-12-06 (+3d) | 2025-12-18 → 2026-09-28 (+284d) |  |  |
| A93260 | Drawings Submittal | 2025-12-03 → 2025-12-06 A (+3d) | 2025-12-18 → 2026-09-28 A (+284d) | 0% → 100% | 356d → none |
| 2 | **Approvals** | 2025-12-20 → 2025-12-06 (-14d) | 2026-01-01 → 2026-09-28 (+270d) |  |  |
| A93270 | Drawings Approvals | 2025-12-20 → 2025-12-06 A (-14d) | 2026-01-01 → 2026-09-28 A (+270d) | 0% → 100% | 356d → none |
| MTS | **MATERIAL SUBMITAL** | 2025-12-03 → 2025-12-06 (+3d) | 2025-12-18 → 2026-01-29 (+42d) |  |  |
| CVA | **CIVIL & ARCHITECTURE** | 2025-12-03 → 2025-12-06 (+3d) | 2025-12-18 → 2026-01-29 (+42d) |  |  |
| A7220 | Sewer Manholes | 2025-12-03 → 2025-12-06 A (+3d) | 2025-12-18 → 2026-01-29 A (+42d) | 0% → 100% | 1d → none |
| A7230 | Storm Manholes | 2025-12-03 → 2025-12-06 A (+3d) | 2025-12-18 → 2026-01-29 A (+42d) | 0% → 100% | 0d → none |
| A7240 | Telecome Manholes | 2025-12-03 → 2025-12-06 A (+3d) | 2025-12-18 → 2026-01-29 A (+42d) | 0% → 100% | 141d → none |
| A7250 | Lighting Poles Precast Foundation & Bolt | 2025-12-03 → 2025-12-06 A (+3d) | 2025-12-18 → 2026-01-29 A (+42d) | 0% → 100% | 371d → none |
| A7260 | Concrete curb | 2025-12-03 → 2025-12-06 A (+3d) | 2025-12-18 → 2026-01-29 A (+42d) | 0% → 100% | 335d → none |
| A7270 | Aggregate Sub-Grade & Basecourse | 2025-12-03 → 2025-12-06 A (+3d) | 2025-12-18 → 2026-01-29 A (+42d) | 0% → 100% | 0d → none |
| A7280 | Asphalt | 2025-12-03 → 2025-12-06 A (+3d) | 2025-12-18 → 2026-01-29 A (+42d) | 0% → 100% | 0d → none |
| A7290 | Traffic signage | 2025-12-03 → 2025-12-06 A (+3d) | 2025-12-18 → 2026-01-29 A (+42d) | 0% → 100% | 57d → none |
| A7300 | Plant and trees | 2025-12-03 → 2025-12-06 A (+3d) | 2025-12-18 → 2026-01-29 A (+42d) | 0% → 100% | 441d → none |
| A7310 | Garbage Bin, trash & litter | 2025-12-03 → 2025-12-06 A (+3d) | 2025-12-18 → 2026-01-29 A (+42d) | 0% → 100% | 511d → none |
| A7320 | Paving blocks 200*100*60 mm | 2025-12-03 → 2025-12-06 A (+3d) | 2025-12-18 → 2026-01-29 A (+42d) | 0% → 100% | 335d → none |
| A7330 | Blocks & Accessories | 2025-12-03 → 2025-12-06 A (+3d) | 2025-12-18 → 2026-01-29 A (+42d) | 0% → 100% | 387d → none |
| A7340 | Access ladder | 2025-12-03 → 2025-12-06 A (+3d) | 2025-12-18 → 2026-01-29 A (+42d) | 0% → 100% | 336d → none |
| A7350 | Stanless steel Handril | 2025-12-03 → 2025-12-06 A (+3d) | 2025-12-18 → 2026-01-29 A (+42d) | 0% → 100% | 366d → none |
| A7360 | Ductile iron steel cover | 2025-12-03 → 2025-12-06 A (+3d) | 2025-12-18 → 2026-01-29 A (+42d) | 0% → 100% | 335d → none |
| A7370 | Structural steel | 2025-12-03 → 2025-12-06 A (+3d) | 2025-12-18 → 2026-01-29 A (+42d) | 0% → 100% | 244d → none |
| A7380 | Waterproofing Work | 2025-12-03 → 2025-12-06 A (+3d) | 2025-12-18 → 2026-01-29 A (+42d) | 0% → 100% | 341d → none |
| A7390 | Waterproofing membrane | 2025-12-03 → 2025-12-06 A (+3d) | 2025-12-18 → 2026-01-29 A (+42d) | 0% → 100% | 341d → none |
| A7400 | Doors - (Glass & Sliding) | 2025-12-03 → 2025-12-06 A (+3d) | 2025-12-18 → 2026-01-29 A (+42d) | 0% → 100% | 356d → none |
| A7410 | Windows | 2025-12-03 → 2025-12-06 A (+3d) | 2025-12-18 → 2026-01-29 A (+42d) | 0% → 100% | 356d → none |
| A7420 | Paints & Epoxy | 2025-12-03 → 2025-12-06 A (+3d) | 2025-12-18 → 2026-01-29 A (+42d) | 0% → 100% | 364d → none |
| A7430 | Granite, ceramic | 2025-12-03 → 2025-12-06 A (+3d) | 2025-12-18 → 2026-01-29 A (+42d) | 0% → 100% | 349d → none |
| A7440 | Terrazzo tiles | 2025-12-03 → 2025-12-06 A (+3d) | 2025-12-18 → 2026-01-29 A (+42d) | 0% → 100% | 349d → none |
| A7450 | Fall ceiling | 2025-12-03 → 2025-12-06 A (+3d) | 2025-12-18 → 2026-01-29 A (+42d) | 0% → 100% | 350d → none |
| A7460 | Safety Bollards | 2025-12-03 → 2025-12-06 A (+3d) | 2025-12-18 → 2026-01-29 A (+42d) | 0% → 100% | 336d → none |
| A7470 | Geotextile Membrane | 2025-12-03 → 2025-12-06 A (+3d) | 2025-12-18 → 2026-01-29 A (+42d) | 0% → 100% | 341d → none |
| A7480 | Curbstone | 2025-12-03 → 2025-12-06 A (+3d) | 2025-12-18 → 2026-01-29 A (+42d) | 0% → 100% | 426d → none |
| A7490 | Sidewalk interlock/Concrete Pavers | 2025-12-03 → 2025-12-06 A (+3d) | 2025-12-18 → 2026-01-29 A (+42d) | 0% → 100% | 222d → none |
| A7500 | Trees and Bushes-Landscape ( soft) | 2025-12-03 → 2025-12-06 A (+3d) | 2025-12-18 → 2026-01-29 A (+42d) | 0% → 100% | 386d → none |
| A7510 | Concrete Masonry Blocks | 2025-12-03 → 2025-12-06 A (+3d) | 2025-12-18 → 2026-01-29 A (+42d) | 0% → 100% | 378d → none |
| A7520 | Block work Accessories | 2025-12-03 → 2025-12-06 A (+3d) | 2025-12-18 → 2026-01-29 A (+42d) | 0% → 100% | 378d → none |
| A7530 | Plaster to receive tile finish | 2025-12-03 → 2025-12-06 A (+3d) | 2025-12-18 → 2026-01-29 A (+42d) | 0% → 100% | 188d → none |
| A7540 | Paint for External Areas | 2025-12-03 → 2025-12-06 A (+3d) | 2025-12-18 → 2026-01-29 A (+42d) | 0% → 100% | 243d → none |
| A7550 | Paint for Internal Areas | 2025-12-03 → 2025-12-06 A (+3d) | 2025-12-18 → 2026-01-29 A (+42d) | 0% → 100% | 323d → none |
| A7560 | Concrete repair & Curing material | 2025-12-03 → 2025-12-06 A (+3d) | 2025-12-18 → 2026-01-29 A (+42d) | 0% → 100% | 403d → none |
| A7570 | Bonding agent | 2025-12-03 → 2025-12-06 A (+3d) | 2025-12-18 → 2026-01-29 A (+42d) | 0% → 100% | 426d → none |
| A7580 | Concrete Mix for PC works | 2025-12-03 → 2025-12-06 A (+3d) | 2025-12-18 → 2026-01-29 A (+42d) | 0% → 100% | 186d → none |
| A7590 | Concrete Mix for RC works | 2025-12-03 → 2025-12-06 A (+3d) | 2025-12-18 → 2026-01-29 A (+42d) | 0% → 100% | 200d → none |

| ID | Task | Start | Finish | Complete | Total float |
| --- | --- | --- | --- | --- | --- |
| A7600 | Reinforcement Steel | 2025-12-03 → 2025-12-06 A (+3d) | 2025-12-18 → 2026-01-29 A (+42d) | 0% → 100% | 214d → none |
| A7610 | Sand Cement Plaster for Internal Walls | 2025-12-03 → 2025-12-06 A (+3d) | 2025-12-18 → 2026-01-29 A (+42d) | 0% → 100% | 88d → none |
| A7620 | Sand Cement Plaster for External Walls | 2025-12-03 → 2025-12-06 A (+3d) | 2025-12-18 → 2026-01-29 A (+42d) | 0% → 100% | 381d → none |
| A7630 | Porcelain Tiling | 2025-12-03 → 2025-12-06 A (+3d) | 2025-12-18 → 2026-01-29 A (+42d) | 0% → 100% | 349d → none |
| A7640 | False Ceilings | 2025-12-03 → 2025-12-06 A (+3d) | 2025-12-18 → 2026-01-29 A (+42d) | 0% → 100% | 350d → none |
| A7650 | Carpet Flooring | 2025-12-03 → 2025-12-06 A (+3d) | 2025-12-18 → 2026-01-29 A (+42d) | 0% → 100% | 384d → none |
| A7660 | Landscape (Hard ) | 2025-12-03 → 2025-12-06 A (+3d) | 2025-12-18 → 2026-01-29 A (+42d) | 0% → 100% | 102d → none |
| ELE | **ELECTRICAL** | 2025-12-03 → 2025-12-06 (+3d) | 2025-12-18 → 2026-01-29 (+42d) |  |  |
| A7680 | Public address System | 2025-12-03 → 2025-12-06 A (+3d) | 2025-12-18 → 2026-01-29 A (+42d) | 0% → 100% | 431d → none |
| A7690 | Fire Pump | 2025-12-03 → 2025-12-06 A (+3d) | 2025-12-18 → 2026-01-29 A (+42d) | 0% → 100% | 401d → none |
| A7700 | Unit Substation & RMU | 2025-12-03 → 2025-12-06 A (+3d) | 2025-12-18 → 2026-01-29 A (+42d) | 0% → 100% | 70d → none |
| A7710 | MV Cables | 2025-12-03 → 2025-12-06 A (+3d) | 2025-12-18 → 2026-01-29 A (+42d) | 0% → 100% | 0d → none |
| A7720 | LV Cables | 2025-12-03 → 2025-12-06 A (+3d) | 2025-12-18 → 2026-01-29 A (+42d) | 0% → 100% | 341d → none |
| A7730 | LV Wire | 2025-12-03 → 2025-12-06 A (+3d) | 2025-12-18 → 2026-01-29 A (+42d) | 0% → 100% | 372d → none |
| A7740 | Electrical Panels | 2025-12-03 → 2025-12-06 A (+3d) | 2025-12-18 → 2026-01-29 A (+42d) | 0% → 100% | 384d → none |
| A7750 | LV Conductors (part of the panels) | 2025-12-03 → 2025-12-06 A (+3d) | 2025-12-18 → 2026-01-29 A (+42d) | 0% → 100% | 372d → none |
| A7760 | Underground Ducts-UPVC | 2025-12-03 → 2025-12-06 A (+3d) | 2025-12-18 → 2026-01-29 A (+42d) | 0% → 100% | 17d → none |
| A7770 | Underground Ducts-HDPE | 2025-12-03 → 2025-12-06 A (+3d) | 2025-12-18 → 2026-01-29 A (+42d) | 0% → 100% | 354d → none |
| A7780 | External Lighting Fixtures | 2025-12-03 → 2025-12-06 A (+3d) | 2025-12-18 → 2026-01-29 A (+42d) | 0% → 100% | 426d → none |
| A7790 | Street Lights Lighting Fixtures | 2025-12-03 → 2025-12-06 A (+3d) | 2025-12-18 → 2026-01-29 A (+42d) | 0% → 100% | 444d → none |
| A7800 | Street Lighting Poles | 2025-12-03 → 2025-12-06 A (+3d) | 2025-12-18 → 2026-01-29 A (+42d) | 0% → 100% | 444d → none |
| A7810 | PVC & EMT conduits | 2025-12-03 → 2025-12-06 A (+3d) | 2025-12-18 → 2026-01-29 A (+42d) | 0% → 100% | 331d → none |
| A7820 | LIGHTING FIXTURES (buildings Internal) | 2025-12-03 → 2025-12-06 A (+3d) | 2025-12-18 → 2026-01-29 A (+42d) | 0% → 100% | 445d → none |
| A7830 | Wiring Devices and Switches | 2025-12-03 → 2025-12-06 A (+3d) | 2025-12-18 → 2026-01-29 A (+42d) | 0% → 100% | 445d → none |
| A7840 | DALI Cabinet (external lighting control) | 2025-12-03 → 2025-12-06 A (+3d) | 2025-12-18 → 2026-01-29 A (+42d) | 0% → 100% | 445d → none |
| A7850 | Earthing System | 2025-12-03 → 2025-12-06 A (+3d) | 2025-12-18 → 2026-01-29 A (+42d) | 0% → 100% | 445d → none |
| A7870 | GI duct work with insulation & Support | 2025-12-03 → 2025-12-06 A (+3d) | 2025-12-18 → 2026-01-29 A (+42d) | 0% → 100% | 369d → none |
| A7880 | Drain & Clean Out | 2025-12-03 → 2025-12-06 A (+3d) | 2025-12-18 → 2026-01-29 A (+42d) | 0% → 100% | 394d → none |
| A7890 | Split AC Package | 2025-12-03 → 2025-12-06 A (+3d) | 2025-12-18 → 2026-01-29 A (+42d) | 0% → 100% | 378d → none |
| A7900 | Ventilation Unit-Fan | 2025-12-03 → 2025-12-06 A (+3d) | 2025-12-18 → 2026-01-29 A (+42d) | 0% → 100% | 378d → none |
| A7910 | Cable glands, lugs and accessories | 2025-12-03 → 2025-12-06 A (+3d) | 2025-12-18 → 2026-01-29 A (+42d) | 0% → 100% | 457d → none |
| MECH | **MECHANICAL** | 2025-12-03 → 2025-12-06 (+3d) | 2025-12-18 → 2026-01-29 (+42d) |  |  |
| A7920 | Secondary Irrigation System | 2025-12-03 → 2025-12-06 A (+3d) | 2025-12-18 → 2026-01-29 A (+42d) | 0% → 100% | 193d → none |
| A7930 | HDPE Pipes & Fittings | 2025-12-03 → 2025-12-06 A (+3d) | 2025-12-18 → 2026-01-29 A (+42d) | 0% → 100% | 44d → none |
| A7940 | UPVC Pipes & Fittings | 2025-12-03 → 2025-12-06 A (+3d) | 2025-12-18 → 2026-01-29 A (+42d) | 0% → 100% | 183d → none |
| A7950 | GRP Pipes & Fittings | 2025-12-03 → 2025-12-06 A (+3d) | 2025-12-18 → 2026-01-29 A (+42d) | 0% → 100% | 107d → none |
| A7960 | Sanitory Ware, Plumbing Fixtures, Toilet Accessories | 2025-12-03 → 2025-12-06 A (+3d) | 2025-12-18 → 2026-01-29 A (+42d) | 0% → 100% | 362d → none |
| A7970 | Water Tank | 2025-12-03 → 2025-12-06 A (+3d) | 2025-12-18 → 2026-01-29 A (+42d) | 0% → 100% | 451d → none |
| A7980 | Gate Valves | 2025-12-03 → 2025-12-06 A (+3d) | 2025-12-18 → 2026-01-29 A (+42d) | 0% → 100% | 4d → none |
| A7990 | Surface Box for Gate valve | 2025-12-03 → 2025-12-06 A (+3d) | 2025-12-18 → 2026-01-29 A (+42d) | 0% → 100% | 74d → none |
| A8000 | Air Release Valves | 2025-12-03 → 2025-12-06 A (+3d) | 2025-12-18 → 2026-01-29 A (+42d) | 0% → 100% | 134d → none |
| A8010 | Washout Valves | 2025-12-03 → 2025-12-06 A (+3d) | 2025-12-18 → 2026-01-29 A (+42d) | 0% → 100% | 214d → none |
| A8020 | Connection Chamber | 2025-12-03 → 2025-12-06 A (+3d) | 2025-12-18 → 2026-01-29 A (+42d) | 0% → 100% | 188d → none |
| A8030 | HDPE House Connections Chambers | 2025-12-03 → 2025-12-06 A (+3d) | 2025-12-18 → 2026-01-29 A (+42d) | 0% → 100% | 103d → none |
| A8040 | Hose Bib | 2025-12-03 → 2025-12-06 A (+3d) | 2025-12-18 → 2026-01-29 A (+42d) | 0% → 100% | 74d → none |
| A8050 | PPR Pipes & Fittings | 2025-12-03 → 2025-12-06 A (+3d) | 2025-12-18 → 2026-01-29 A (+42d) | 0% → 100% | 144d → none |
| A8060 | Water Hammer Arrestor & TMV | 2025-12-03 → 2025-12-06 A (+3d) | 2025-12-18 → 2026-01-29 A (+42d) | 0% → 100% | 444d → none |
| A8070 | Sewage Manholes Cover with frame | 2025-12-03 → 2025-12-06 A (+3d) | 2025-12-18 → 2026-01-29 A (+42d) | 0% → 100% | 63d → none |
| A8080 | Irrigation Manholes Cover with frame | 2025-12-03 → 2025-12-06 A (+3d) | 2025-12-18 → 2026-01-29 A (+42d) | 0% → 100% | 133d → none |
| A8090 | Potable Manholes Cover with frame | 2025-12-03 → 2025-12-06 A (+3d) | 2025-12-18 → 2026-01-29 A (+42d) | 0% → 100% | 189d → none |
| A8100 | ICT Manholes Cover with frame | 2025-12-03 → 2025-12-06 A (+3d) | 2025-12-18 → 2026-01-29 A (+42d) | 0% → 100% | 245d → none |
| A8110 | Polyethylene Sheets | 2025-12-03 → 2025-12-06 A (+3d) | 2025-12-18 → 2026-01-29 A (+42d) | 0% → 100% | 21d → none |
| A8120 | Warning Tape | 2025-12-03 → 2025-12-06 A (+3d) | 2025-12-18 → 2026-01-29 A (+42d) | 0% → 100% | 83d → none |
| A8130 | Bitumen Paint (Bituminous Damp proofing) | 2025-12-03 → 2025-12-06 A (+3d) | 2025-12-18 → 2026-01-29 A (+42d) | 0% → 100% | 431d → none |
| A8140 | Anti Termite & Pest Contro; | 2025-12-03 → 2025-12-06 A (+3d) | 2025-12-18 → 2026-01-29 A (+42d) | 0% → 100% | 306d → none |
| A8150 | Warning tape | 2025-12-03 → 2025-12-06 A (+3d) | 2025-12-18 → 2026-01-29 A (+42d) | 0% → 100% | 68d → none |
| A8160 | Fire Hydrants | 2025-12-03 → 2025-12-06 A (+3d) | 2025-12-18 → 2026-01-29 A (+42d) | 0% → 100% | 189d → none |
| A8170 | OS & Y Gate valve | 2025-12-03 → 2025-12-06 A (+3d) | 2025-12-18 → 2026-01-29 A (+42d) | 0% → 100% | 264d → none |
| A8180 | Fire Extinguisher | 2025-12-03 → 2025-12-06 A (+3d) | 2025-12-18 → 2026-01-29 A (+42d) | 0% → 100% | 102d → none |
| A8190 | Fire Alarm systems & cable | 2025-12-03 → 2025-12-06 A (+3d) | 2025-12-18 → 2026-01-29 A (+42d) | 0% → 100% | 172d → none |
| A8200 | Water Heater | 2025-12-03 → 2025-12-06 A (+3d) | 2025-12-18 → 2026-01-29 A (+42d) | 0% → 100% | 374d → none |
| A8210 | Termination Kits | 2025-12-03 → 2025-12-06 A (+3d) | 2025-12-18 → 2026-01-29 A (+42d) | 0% → 100% | 454d → none |
| MTA | **MATERIAL APPROVAL** | 2025-12-20 → 2025-12-06 (-14d) | 2026-01-04 → 2026-01-29 (+25d) |  |  |
| CVA | **CIVIL & ARCHITECTURE** | 2025-12-20 → 2025-12-06 (-14d) | 2026-01-04 → 2026-01-29 (+25d) |  |  |
| A8220 | Sewer Manholes | 2025-12-20 → 2025-12-06 A (-14d) | 2026-01-04 → 2026-01-29 A (+25d) | 0% → 100% | 1d → none |
| A8230 | Storm Manholes | 2025-12-20 → 2025-12-06 A (-14d) | 2026-01-04 → 2026-01-29 A (+25d) | 0% → 100% | 0d → none |
| A8240 | Telecome Manholes | 2025-12-20 → 2025-12-06 A (-14d) | 2026-01-04 → 2026-01-29 A (+25d) | 0% → 100% | 141d → none |
| A8250 | Lighting Poles Precast Foundation & Bolt | 2025-12-20 → 2025-12-06 A (-14d) | 2026-01-04 → 2026-01-29 A (+25d) | 0% → 100% | 371d → none |
| A8260 | Concrete curb | 2025-12-20 → 2025-12-06 A (-14d) | 2026-01-04 → 2026-01-29 A (+25d) | 0% → 100% | 335d → none |
| A8270 | Aggregate Sub-Grade & Basecourse | 2025-12-20 → 2025-12-06 A (-14d) | 2026-01-04 → 2026-01-29 A (+25d) | 0% → 100% | 0d → none |

| ID | Task | Start | Finish | Complete | Total float |
| --- | --- | --- | --- | --- | --- |
| A8280 | Asphalt | 2025-12-20 → 2025-12-06 A (-14d) | 2026-01-04 → 2026-01-29 A (+25d) | 0% → 100% | 0d → none |
| A8290 | Traffic signage | 2025-12-20 → 2025-12-06 A (-14d) | 2026-01-04 → 2026-01-29 A (+25d) | 0% → 100% | 57d → none |
| A8300 | Plant and trees | 2025-12-20 → 2025-12-06 A (-14d) | 2026-01-04 → 2026-01-29 A (+25d) | 0% → 100% | 441d → none |
| A8310 | Garbage Bin, trash & litter | 2025-12-20 → 2025-12-06 A (-14d) | 2026-01-04 → 2026-01-29 A (+25d) | 0% → 100% | 511d → none |
| A8320 | Paving blocks 200*100*60 mm | 2025-12-20 → 2025-12-06 A (-14d) | 2026-01-04 → 2026-01-29 A (+25d) | 0% → 100% | 335d → none |
| A8330 | Blocks & Accessories | 2025-12-20 → 2025-12-06 A (-14d) | 2026-01-04 → 2026-01-29 A (+25d) | 0% → 100% | 387d → none |
| A8340 | Access ladder | 2025-12-20 → 2025-12-06 A (-14d) | 2026-01-04 → 2026-01-29 A (+25d) | 0% → 100% | 336d → none |
| A8350 | Stanless steel Handril | 2025-12-20 → 2025-12-06 A (-14d) | 2026-01-04 → 2026-01-29 A (+25d) | 0% → 100% | 366d → none |
| A8360 | Ductile iron steel cover | 2025-12-20 → 2025-12-06 A (-14d) | 2026-01-04 → 2026-01-29 A (+25d) | 0% → 100% | 335d → none |
| A8370 | Structural steel | 2025-12-20 → 2025-12-06 A (-14d) | 2026-01-04 → 2026-01-29 A (+25d) | 0% → 100% | 244d → none |
| A8380 | Waterproofing Work | 2025-12-20 → 2025-12-06 A (-14d) | 2026-01-04 → 2026-01-29 A (+25d) | 0% → 100% | 341d → none |
| A8390 | Waterproofing membrane | 2025-12-20 → 2025-12-06 A (-14d) | 2026-01-04 → 2026-01-29 A (+25d) | 0% → 100% | 341d → none |
| A8400 | Doors - (Glass & Sliding) | 2025-12-20 → 2025-12-06 A (-14d) | 2026-01-04 → 2026-01-29 A (+25d) | 0% → 100% | 356d → none |
| A8410 | Windows | 2025-12-20 → 2025-12-06 A (-14d) | 2026-01-04 → 2026-01-29 A (+25d) | 0% → 100% | 356d → none |
| A8420 | Paints & Epoxy | 2025-12-20 → 2025-12-06 A (-14d) | 2026-01-04 → 2026-01-29 A (+25d) | 0% → 100% | 364d → none |
| A8430 | Granite, ceramic | 2025-12-20 → 2025-12-06 A (-14d) | 2026-01-04 → 2026-01-29 A (+25d) | 0% → 100% | 349d → none |
| A8440 | Terrazzo tiles | 2025-12-20 → 2025-12-06 A (-14d) | 2026-01-04 → 2026-01-29 A (+25d) | 0% → 100% | 349d → none |
| A8450 | Fall ceiling | 2025-12-20 → 2025-12-06 A (-14d) | 2026-01-04 → 2026-01-29 A (+25d) | 0% → 100% | 350d → none |
| A8460 | Safety Bollards | 2025-12-20 → 2025-12-06 A (-14d) | 2026-01-04 → 2026-01-29 A (+25d) | 0% → 100% | 336d → none |
| A8470 | Geotextile Membrane | 2025-12-20 → 2025-12-06 A (-14d) | 2026-01-04 → 2026-01-29 A (+25d) | 0% → 100% | 341d → none |
| A8480 | Curbstone | 2025-12-20 → 2025-12-06 A (-14d) | 2026-01-04 → 2026-01-29 A (+25d) | 0% → 100% | 426d → none |
| A8490 | Sidewalk interlock/Concrete Pavers | 2025-12-20 → 2025-12-06 A (-14d) | 2026-01-04 → 2026-01-29 A (+25d) | 0% → 100% | 222d → none |
| A8500 | Trees and Bushes-Landscape ( soft) | 2025-12-20 → 2025-12-06 A (-14d) | 2026-01-04 → 2026-01-29 A (+25d) | 0% → 100% | 386d → none |
| A8510 | Concrete Masonry Blocks | 2025-12-20 → 2025-12-06 A (-14d) | 2026-01-04 → 2026-01-29 A (+25d) | 0% → 100% | 378d → none |
| A8520 | Block work Accessories | 2025-12-20 → 2025-12-06 A (-14d) | 2026-01-04 → 2026-01-29 A (+25d) | 0% → 100% | 378d → none |
| A8530 | Plaster to receive tile finish | 2025-12-20 → 2025-12-06 A (-14d) | 2026-01-04 → 2026-01-29 A (+25d) | 0% → 100% | 188d → none |
| A8540 | Paint for External Areas | 2025-12-20 → 2025-12-06 A (-14d) | 2026-01-04 → 2026-01-29 A (+25d) | 0% → 100% | 243d → none |
| A8550 | Paint for Internal Areas | 2025-12-20 → 2025-12-06 A (-14d) | 2026-01-04 → 2026-01-29 A (+25d) | 0% → 100% | 323d → none |
| A8560 | Concrete repair & Curing material | 2025-12-20 → 2025-12-06 A (-14d) | 2026-01-04 → 2026-01-29 A (+25d) | 0% → 100% | 403d → none |
| A8570 | Bonding agent | 2025-12-20 → 2025-12-06 A (-14d) | 2026-01-04 → 2026-01-29 A (+25d) | 0% → 100% | 426d → none |
| A8580 | Concrete Mix for PC works | 2025-12-20 → 2025-12-06 A (-14d) | 2026-01-04 → 2026-01-29 A (+25d) | 0% → 100% | 186d → none |
| A8590 | Concrete Mix for RC works | 2025-12-20 → 2025-12-06 A (-14d) | 2026-01-04 → 2026-01-29 A (+25d) | 0% → 100% | 200d → none |
| A8600 | Reinforcement Steel | 2025-12-20 → 2025-12-06 A (-14d) | 2026-01-04 → 2026-01-29 A (+25d) | 0% → 100% | 214d → none |
| A8610 | Sand Cement Plaster for Internal Walls | 2025-12-20 → 2025-12-06 A (-14d) | 2026-01-04 → 2026-01-29 A (+25d) | 0% → 100% | 88d → none |
| A8620 | Sand Cement Plaster for External Walls | 2025-12-20 → 2025-12-06 A (-14d) | 2026-01-04 → 2026-01-29 A (+25d) | 0% → 100% | 381d → none |
| A8630 | Porcelain Tiling | 2025-12-20 → 2025-12-06 A (-14d) | 2026-01-04 → 2026-01-29 A (+25d) | 0% → 100% | 349d → none |
| A8640 | False Ceilings | 2025-12-20 → 2025-12-06 A (-14d) | 2026-01-04 → 2026-01-29 A (+25d) | 0% → 100% | 350d → none |
| A8650 | Carpet Flooring | 2025-12-20 → 2025-12-06 A (-14d) | 2026-01-04 → 2026-01-29 A (+25d) | 0% → 100% | 384d → none |
| A8660 | Landscape (Hard ) | 2025-12-20 → 2025-12-06 A (-14d) | 2026-01-04 → 2026-01-29 A (+25d) | 0% → 100% | 102d → none |
| ELE | **ELECTRICAL** | 2025-12-20 → 2025-12-06 (-14d) | 2026-01-04 → 2026-01-29 (+25d) |  |  |
| A8680 | Public address System | 2025-12-20 → 2025-12-06 A (-14d) | 2026-01-04 → 2026-01-29 A (+25d) | 0% → 100% | 431d → none |
| A8690 | Fire Pump | 2025-12-20 → 2025-12-06 A (-14d) | 2026-01-04 → 2026-01-29 A (+25d) | 0% → 100% | 401d → none |
| A8700 | Unit Substation & RMU | 2025-12-20 → 2025-12-06 A (-14d) | 2026-01-04 → 2026-01-29 A (+25d) | 0% → 100% | 70d → none |
| A8710 | MV Cables | 2025-12-20 → 2025-12-06 A (-14d) | 2026-01-04 → 2026-01-29 A (+25d) | 0% → 100% | 0d → none |
| A8720 | LV Cables | 2025-12-20 → 2025-12-06 A (-14d) | 2026-01-04 → 2026-01-29 A (+25d) | 0% → 100% | 341d → none |
| A8730 | LV Wire | 2025-12-20 → 2025-12-06 A (-14d) | 2026-01-04 → 2026-01-29 A (+25d) | 0% → 100% | 372d → none |
| A8740 | Electrical Panels | 2025-12-20 → 2025-12-06 A (-14d) | 2026-01-04 → 2026-01-29 A (+25d) | 0% → 100% | 384d → none |
| A8750 | LV Conductors (part of the panels) | 2025-12-20 → 2025-12-06 A (-14d) | 2026-01-04 → 2026-01-29 A (+25d) | 0% → 100% | 372d → none |
| A8760 | Underground Ducts-UPVC | 2025-12-20 → 2025-12-06 A (-14d) | 2026-01-04 → 2026-01-29 A (+25d) | 0% → 100% | 17d → none |
| A8770 | Underground Ducts-HDPE | 2025-12-20 → 2025-12-06 A (-14d) | 2026-01-04 → 2026-01-29 A (+25d) | 0% → 100% | 354d → none |
| A8780 | External Lighting Fixtures | 2025-12-20 → 2025-12-06 A (-14d) | 2026-01-04 → 2026-01-29 A (+25d) | 0% → 100% | 426d → none |
| A8790 | Street Lights Lighting Fixtures | 2025-12-20 → 2025-12-06 A (-14d) | 2026-01-04 → 2026-01-29 A (+25d) | 0% → 100% | 444d → none |
| A8800 | Street Lighting Poles | 2025-12-20 → 2025-12-06 A (-14d) | 2026-01-04 → 2026-01-29 A (+25d) | 0% → 100% | 444d → none |
| A8810 | PVC & EMT conduits | 2025-12-20 → 2025-12-06 A (-14d) | 2026-01-04 → 2026-01-29 A (+25d) | 0% → 100% | 331d → none |
| A8820 | LIGHTING FIXTURES (buildings Internal) | 2025-12-20 → 2025-12-06 A (-14d) | 2026-01-04 → 2026-01-29 A (+25d) | 0% → 100% | 445d → none |
| A8830 | Wiring Devices and Switches | 2025-12-20 → 2025-12-06 A (-14d) | 2026-01-04 → 2026-01-29 A (+25d) | 0% → 100% | 445d → none |
| A8840 | DALI Cabinet (external lighting control) | 2025-12-20 → 2025-12-06 A (-14d) | 2026-01-04 → 2026-01-29 A (+25d) | 0% → 100% | 445d → none |
| A8850 | Earthing System | 2025-12-20 → 2025-12-06 A (-14d) | 2026-01-04 → 2026-01-29 A (+25d) | 0% → 100% | 445d → none |
| A8870 | GI duct work with insulation & Support | 2025-12-20 → 2025-12-06 A (-14d) | 2026-01-04 → 2026-01-29 A (+25d) | 0% → 100% | 369d → none |
| A8880 | Drain & Clean Out | 2025-12-20 → 2025-12-06 A (-14d) | 2026-01-04 → 2026-01-29 A (+25d) | 0% → 100% | 394d → none |
| A8890 | Split AC Package | 2025-12-20 → 2025-12-06 A (-14d) | 2026-01-04 → 2026-01-29 A (+25d) | 0% → 100% | 378d → none |
| A8900 | Ventilation Unit-Fan | 2025-12-20 → 2025-12-06 A (-14d) | 2026-01-04 → 2026-01-29 A (+25d) | 0% → 100% | 378d → none |
| A8910 | Cable glands, lugs and accessories | 2025-12-20 → 2025-12-06 A (-14d) | 2026-01-04 → 2026-01-29 A (+25d) | 0% → 100% | 457d → none |
| MECH | **MECHANICAL** | 2025-12-20 → 2025-12-06 (-14d) | 2026-01-04 → 2026-01-29 (+25d) |  |  |
| A8920 | Secondary Irrigation System | 2025-12-20 → 2025-12-06 A (-14d) | 2026-01-04 → 2026-01-29 A (+25d) | 0% → 100% | 193d → none |
| A8930 | HDPE Pipes & Fittings | 2025-12-20 → 2025-12-06 A (-14d) | 2026-01-04 → 2026-01-29 A (+25d) | 0% → 100% | 44d → none |
| A8940 | UPVC Pipes & Fittings | 2025-12-20 → 2025-12-06 A (-14d) | 2026-01-04 → 2026-01-29 A (+25d) | 0% → 100% | 183d → none |
| A8950 | GRP Pipes & Fittings | 2025-12-20 → 2025-12-06 A (-14d) | 2026-01-04 → 2026-01-29 A (+25d) | 0% → 100% | 107d → none |
| A8960 | Sanitory Ware, Plumbing Fixtures, Toilet Accessories | 2025-12-20 → 2025-12-06 A (-14d) | 2026-01-04 → 2026-01-29 A (+25d) | 0% → 100% | 362d → none |
| A8970 | Water Tank | 2025-12-20 → 2025-12-06 A (-14d) | 2026-01-04 → 2026-01-29 A (+25d) | 0% → 100% | 451d → none |

| ID | Task | Start | Finish | Complete | Total float |
| --- | --- | --- | --- | --- | --- |
| A8980 | Gate Valves | 2025-12-20 → 2025-12-06 A (-14d) | 2026-01-04 → 2026-01-29 A (+25d) | 0% → 100% | 4d → none |
| A8990 | Surface Box for Gate valve | 2025-12-20 → 2025-12-06 A (-14d) | 2026-01-04 → 2026-01-29 A (+25d) | 0% → 100% | 74d → none |
| A9000 | Air Release Valves | 2025-12-20 → 2025-12-06 A (-14d) | 2026-01-04 → 2026-01-29 A (+25d) | 0% → 100% | 134d → none |
| A9010 | Washout Valves | 2025-12-20 → 2025-12-06 A (-14d) | 2026-01-04 → 2026-01-29 A (+25d) | 0% → 100% | 214d → none |
| A9020 | Connection Chamber | 2025-12-20 → 2025-12-06 A (-14d) | 2026-01-04 → 2026-01-29 A (+25d) | 0% → 100% | 188d → none |
| A9030 | HDPE House Connections Chambers | 2025-12-20 → 2025-12-06 A (-14d) | 2026-01-04 → 2026-01-29 A (+25d) | 0% → 100% | 103d → none |
| A9040 | Hose Bib | 2025-12-20 → 2025-12-06 A (-14d) | 2026-01-04 → 2026-01-29 A (+25d) | 0% → 100% | 74d → none |
| A9050 | PPR Pipes & Fittings | 2025-12-20 → 2025-12-06 A (-14d) | 2026-01-04 → 2026-01-29 A (+25d) | 0% → 100% | 144d → none |
| A9060 | Water Hammer Arrestor & TMV | 2025-12-20 → 2025-12-06 A (-14d) | 2026-01-04 → 2026-01-29 A (+25d) | 0% → 100% | 444d → none |
| A9070 | Sewage Manholes Cover with frame | 2025-12-20 → 2025-12-06 A (-14d) | 2026-01-04 → 2026-01-29 A (+25d) | 0% → 100% | 63d → none |
| A9080 | Irrigation Manholes Cover with frame | 2025-12-20 → 2025-12-06 A (-14d) | 2026-01-04 → 2026-01-29 A (+25d) | 0% → 100% | 133d → none |
| A9090 | Potable Manholes Cover with frame | 2025-12-20 → 2025-12-06 A (-14d) | 2026-01-04 → 2026-01-29 A (+25d) | 0% → 100% | 189d → none |
| A9100 | ICT Manholes Cover with frame | 2025-12-20 → 2025-12-06 A (-14d) | 2026-01-04 → 2026-01-29 A (+25d) | 0% → 100% | 245d → none |
| A9110 | Polyethylene Sheets | 2025-12-20 → 2025-12-06 A (-14d) | 2026-01-04 → 2026-01-29 A (+25d) | 0% → 100% | 21d → none |
| A9120 | Warning Tape | 2025-12-20 → 2025-12-06 A (-14d) | 2026-01-04 → 2026-01-29 A (+25d) | 0% → 100% | 83d → none |
| A9130 | Bitumen Paint (Bituminous Damp proofing) | 2025-12-20 → 2025-12-06 A (-14d) | 2026-01-04 → 2026-01-29 A (+25d) | 0% → 100% | 431d → none |
| A9140 | Anti Termite & Pest Contro; | 2025-12-20 → 2025-12-06 A (-14d) | 2026-01-04 → 2026-01-29 A (+25d) | 0% → 100% | 306d → none |
| A9150 | Warning tape | 2025-12-20 → 2025-12-06 A (-14d) | 2026-01-04 → 2026-01-29 A (+25d) | 0% → 100% | 68d → none |
| A9160 | Fire Hydrants | 2025-12-20 → 2025-12-06 A (-14d) | 2026-01-04 → 2026-01-29 A (+25d) | 0% → 100% | 189d → none |
| A9170 | OS & Y Gate valve | 2025-12-20 → 2025-12-06 A (-14d) | 2026-01-04 → 2026-01-29 A (+25d) | 0% → 100% | 264d → none |
| A9180 | Fire Extinguisher | 2025-12-20 → 2025-12-06 A (-14d) | 2026-01-04 → 2026-01-29 A (+25d) | 0% → 100% | 102d → none |
| A9190 | Fire Alarm systems & cable | 2025-12-20 → 2025-12-06 A (-14d) | 2026-01-04 → 2026-01-29 A (+25d) | 0% → 100% | 172d → none |
| A9200 | Water Heater | 2025-12-20 → 2025-12-06 A (-14d) | 2026-01-04 → 2026-01-29 A (+25d) | 0% → 100% | 374d → none |
| A9210 | Termination Kits | 2025-12-20 → 2025-12-06 A (-14d) | 2026-01-04 → 2026-01-29 A (+25d) | 0% → 100% | 454d → none |
| PRO | **PROCUREMENT** | 2026-01-05 → 2025-12-06 (-30d) | 2027-11-03 → 2027-02-10 (-266d) |  |  |
| PO | **PURCHASE ORDER "PO"** | 2026-01-05 → 2025-12-06 (-30d) | 2026-01-28 → 2026-01-29 (+1d) |  |  |
| CVA | **CIVIL & ARCHITECTURE** | 2026-01-05 → 2025-12-06 (-30d) | 2026-01-15 → 2026-01-29 (+14d) |  |  |
| A9230 | Sewer Manholes | 2026-01-05 → 2025-12-06 A (-30d) | 2026-01-15 → 2026-01-29 A (+14d) | 0% → 100% | 1d → none |
| A9240 | Storm Manholes | 2026-01-05 → 2025-12-06 A (-30d) | 2026-01-15 → 2026-01-29 A (+14d) | 0% → 100% | 0d → none |
| A9250 | Telecome Manholes | 2026-01-05 → 2025-12-06 A (-30d) | 2026-01-15 → 2026-01-29 A (+14d) | 0% → 100% | 141d → none |
| A9260 | Lighting Poles Precast Foundation & Bolt | 2026-01-05 → 2025-12-06 A (-30d) | 2026-01-15 → 2026-01-29 A (+14d) | 0% → 100% | 371d → none |
| A9270 | Concrete curb | 2026-01-05 → 2025-12-06 A (-30d) | 2026-01-15 → 2026-01-29 A (+14d) | 0% → 100% | 335d → none |
| A9280 | Aggregate Sub-Grade & Basecourse | 2026-01-05 → 2025-12-06 A (-30d) | 2026-01-15 → 2026-01-29 A (+14d) | 0% → 100% | 0d → none |
| A9290 | Asphalt | 2026-01-05 → 2025-12-06 A (-30d) | 2026-01-15 → 2026-01-29 A (+14d) | 0% → 100% | 0d → none |
| A9300 | Traffic signage | 2026-01-05 → 2025-12-06 A (-30d) | 2026-01-15 → 2026-01-29 A (+14d) | 0% → 100% | 57d → none |
| A9310 | Plant and trees | 2026-01-05 → 2025-12-06 A (-30d) | 2026-01-15 → 2026-01-29 A (+14d) | 0% → 100% | 441d → none |
| A9320 | Garbage Bin, trash & litter | 2026-01-05 → 2025-12-06 A (-30d) | 2026-01-15 → 2026-01-29 A (+14d) | 0% → 100% | 511d → none |
| A9330 | Paving blocks 200*100*60 mm | 2026-01-05 → 2025-12-06 A (-30d) | 2026-01-15 → 2026-01-29 A (+14d) | 0% → 100% | 335d → none |
| A9340 | Blocks & Accessories | 2026-01-05 → 2025-12-06 A (-30d) | 2026-01-15 → 2026-01-29 A (+14d) | 0% → 100% | 387d → none |
| A9350 | Access ladder | 2026-01-05 → 2025-12-06 A (-30d) | 2026-01-15 → 2026-01-29 A (+14d) | 0% → 100% | 336d → none |
| A9360 | Stanless steel Handril | 2026-01-05 → 2025-12-06 A (-30d) | 2026-01-15 → 2026-01-29 A (+14d) | 0% → 100% | 366d → none |
| A9370 | Ductile iron steel cover | 2026-01-05 → 2025-12-06 A (-30d) | 2026-01-15 → 2026-01-29 A (+14d) | 0% → 100% | 335d → none |
| A9380 | Structural steel | 2026-01-05 → 2025-12-06 A (-30d) | 2026-01-15 → 2026-01-29 A (+14d) | 0% → 100% | 244d → none |
| A9390 | Waterproofing Work | 2026-01-05 → 2025-12-06 A (-30d) | 2026-01-15 → 2026-01-29 A (+14d) | 0% → 100% | 341d → none |
| A9400 | Waterproofing membrane | 2026-01-05 → 2025-12-06 A (-30d) | 2026-01-15 → 2026-01-29 A (+14d) | 0% → 100% | 341d → none |
| A9410 | Doors - (Glass & Sliding) | 2026-01-05 → 2025-12-06 A (-30d) | 2026-01-15 → 2026-01-29 A (+14d) | 0% → 100% | 356d → none |
| A9420 | Windows | 2026-01-05 → 2025-12-06 A (-30d) | 2026-01-15 → 2026-01-29 A (+14d) | 0% → 100% | 356d → none |
| A9430 | Paints & Epoxy | 2026-01-05 → 2025-12-06 A (-30d) | 2026-01-15 → 2026-01-29 A (+14d) | 0% → 100% | 364d → none |
| A9440 | Granite, ceramic | 2026-01-05 → 2025-12-06 A (-30d) | 2026-01-15 → 2026-01-29 A (+14d) | 0% → 100% | 349d → none |
| A9450 | Terrazzo tiles | 2026-01-05 → 2025-12-06 A (-30d) | 2026-01-15 → 2026-01-29 A (+14d) | 0% → 100% | 349d → none |
| A9460 | Fall ceiling | 2026-01-05 → 2025-12-06 A (-30d) | 2026-01-15 → 2026-01-29 A (+14d) | 0% → 100% | 350d → none |
| A9470 | Safety Bollards | 2026-01-05 → 2025-12-06 A (-30d) | 2026-01-15 → 2026-01-29 A (+14d) | 0% → 100% | 336d → none |
| A9480 | Geotextile Membrane | 2026-01-05 → 2025-12-06 A (-30d) | 2026-01-15 → 2026-01-29 A (+14d) | 0% → 100% | 341d → none |
| A9490 | Curbstone | 2026-01-05 → 2025-12-06 A (-30d) | 2026-01-15 → 2026-01-29 A (+14d) | 0% → 100% | 426d → none |
| A9500 | Sidewalk interlock/Concrete Pavers | 2026-01-05 → 2025-12-06 A (-30d) | 2026-01-15 → 2026-01-29 A (+14d) | 0% → 100% | 222d → none |
| A9510 | Trees and Bushes-Landscape ( soft) | 2026-01-05 → 2025-12-06 A (-30d) | 2026-01-15 → 2026-01-29 A (+14d) | 0% → 100% | 386d → none |
| A9520 | Concrete Masonry Blocks | 2026-01-05 → 2025-12-06 A (-30d) | 2026-01-15 → 2026-01-29 A (+14d) | 0% → 100% | 378d → none |
| A9530 | Block work Accessories | 2026-01-05 → 2025-12-06 A (-30d) | 2026-01-15 → 2026-01-29 A (+14d) | 0% → 100% | 378d → none |
| A9540 | Plaster to receive tile finish | 2026-01-05 → 2025-12-06 A (-30d) | 2026-01-15 → 2026-01-29 A (+14d) | 0% → 100% | 188d → none |
| A9550 | Paint for External Areas | 2026-01-05 → 2025-12-06 A (-30d) | 2026-01-15 → 2026-01-29 A (+14d) | 0% → 100% | 243d → none |
| A9560 | Paint for Internal Areas | 2026-01-05 → 2025-12-06 A (-30d) | 2026-01-15 → 2026-01-29 A (+14d) | 0% → 100% | 323d → none |
| A9570 | Concrete repair & Curing material | 2026-01-05 → 2025-12-06 A (-30d) | 2026-01-15 → 2026-01-29 A (+14d) | 0% → 100% | 403d → none |
| A9580 | Bonding agent | 2026-01-05 → 2025-12-06 A (-30d) | 2026-01-15 → 2026-01-29 A (+14d) | 0% → 100% | 426d → none |
| A9590 | Concrete Mix for PC works | 2026-01-05 → 2025-12-06 A (-30d) | 2026-01-15 → 2026-01-29 A (+14d) | 0% → 100% | 186d → none |
| A9600 | Concrete Mix for RC works | 2026-01-05 → 2025-12-06 A (-30d) | 2026-01-15 → 2026-01-29 A (+14d) | 0% → 100% | 200d → none |
| A9610 | Reinforcement Steel | 2026-01-05 → 2025-12-06 A (-30d) | 2026-01-15 → 2026-01-29 A (+14d) | 0% → 100% | 214d → none |
| A9620 | Sand Cement Plaster for Internal Walls | 2026-01-05 → 2025-12-06 A (-30d) | 2026-01-15 → 2026-01-29 A (+14d) | 0% → 100% | 88d → none |
| A9630 | Sand Cement Plaster for External Walls | 2026-01-05 → 2025-12-06 A (-30d) | 2026-01-15 → 2026-01-29 A (+14d) | 0% → 100% | 381d → none |
| A9640 | Porcelain Tiling | 2026-01-05 → 2025-12-06 A (-30d) | 2026-01-15 → 2026-01-29 A (+14d) | 0% → 100% | 349d → none |
| A9650 | False Ceilings | 2026-01-05 → 2025-12-06 A (-30d) | 2026-01-15 → 2026-01-29 A (+14d) | 0% → 100% | 350d → none |

| ID | Task | Start | Finish | Duration | Complete | Total float | Predecessors | Other |
| --- | --- | --- | --- | --- | --- | --- | --- | --- |
| A9660 | Carpet Flooring | 2026-01-05 → 2025-12-06 A (-30d) | 2026-01-15 → 2026-01-29 A (+14d) |  | 0% → 100% | 384d → none |  |  |
| A9670 | Landscape (Hard ) | 2026-01-05 → 2025-12-06 A (-30d) | 2026-01-15 → 2026-01-29 A (+14d) |  | 0% → 100% | 102d → none |  |  |
| ELE | **ELECTRICAL** | 2026-01-05 → 2025-12-06 (-30d) | 2026-01-28 → 2026-01-29 (+1d) |  |  |  |  |  |
| A9690 | Public address System | 2026-01-05 → 2025-12-06 A (-30d) | 2026-01-28 → 2026-01-29 A (+1d) |  | 0% → 100% | 431d → none |  |  |
| A9700 | Fire Pump | 2026-01-05 → 2025-12-06 A (-30d) | 2026-01-28 → 2026-01-29 A (+1d) |  | 0% → 100% | 401d → none |  |  |
| A9710 | Unit Substation & RMU | 2026-01-05 → 2025-12-06 A (-30d) | 2026-01-28 → 2026-01-29 A (+1d) |  | 0% → 100% | 70d → none |  |  |
| A9720 | MV Cables | 2026-01-05 → 2025-12-06 A (-30d) | 2026-01-15 → 2026-01-29 A (+14d) |  | 0% → 100% | 0d → none |  |  |
| A9730 | LV Cables | 2026-01-05 → 2025-12-06 A (-30d) | 2026-01-28 → 2026-01-29 A (+1d) |  | 0% → 100% | 341d → none |  |  |
| A9740 | LV Wire | 2026-01-05 → 2025-12-06 A (-30d) | 2026-01-28 → 2026-01-29 A (+1d) |  | 0% → 100% | 372d → none |  |  |
| A9750 | Electrical Panels | 2026-01-05 → 2025-12-06 A (-30d) | 2026-01-28 → 2026-01-29 A (+1d) |  | 0% → 100% | 384d → none |  |  |
| A9760 | LV Conductors (part of the panels) | 2026-01-05 → 2025-12-06 A (-30d) | 2026-01-28 → 2026-01-29 A (+1d) |  | 0% → 100% | 372d → none |  |  |
| A9770 | Underground Ducts-UPVC | 2026-01-05 → 2025-12-06 A (-30d) | 2026-01-28 → 2026-01-29 A (+1d) |  | 0% → 100% | 17d → none |  |  |
| A9780 | Underground Ducts-HDPE | 2026-01-05 → 2025-12-06 A (-30d) | 2026-01-28 → 2026-01-29 A (+1d) |  | 0% → 100% | 354d → none |  |  |
| A9790 | External Lighting Fixtures | 2026-01-05 → 2025-12-06 A (-30d) | 2026-01-28 → 2026-01-29 A (+1d) |  | 0% → 100% | 426d → none |  |  |
| A9800 | Street Lights Lighting Fixtures | 2026-01-05 → 2025-12-06 A (-30d) | 2026-01-22 → 2026-01-29 A (+7d) |  | 0% → 100% | 444d → none |  |  |
| A9810 | Street Lighting Poles | 2026-01-05 → 2025-12-06 A (-30d) | 2026-01-22 → 2026-01-29 A (+7d) |  | 0% → 100% | 444d → none |  |  |
| A9820 | PVC & EMT conduits | 2026-01-05 → 2025-12-06 A (-30d) | 2026-01-22 → 2026-01-29 A (+7d) |  | 0% → 100% | 331d → none |  |  |
| A9830 | LIGHTING FIXTURES (buildings Internal) | 2026-01-05 → 2025-12-06 A (-30d) | 2026-01-22 → 2026-01-29 A (+7d) |  | 0% → 100% | 445d → none |  |  |
| A9840 | Wiring Devices and Switches | 2026-01-05 → 2025-12-06 A (-30d) | 2026-01-22 → 2026-01-29 A (+7d) |  | 0% → 100% | 445d → none |  |  |
| A9850 | DALI Cabinet (external lighting control) | 2026-01-05 → 2025-12-06 A (-30d) | 2026-01-22 → 2026-01-29 A (+7d) |  | 0% → 100% | 445d → none |  |  |
| A9860 | Earthing System | 2026-01-05 → 2025-12-06 A (-30d) | 2026-01-22 → 2026-01-29 A (+7d) |  | 0% → 100% | 445d → none |  |  |
| A9880 | GI duct work with insulation & Support | 2026-01-05 → 2025-12-06 A (-30d) | 2026-01-22 → 2026-01-29 A (+7d) |  | 0% → 100% | 369d → none |  |  |
| A9890 | Drain & Clean Out | 2026-01-05 → 2025-12-06 A (-30d) | 2026-01-22 → 2026-01-29 A (+7d) |  | 0% → 100% | 394d → none |  |  |
| A9900 | Split AC Package | 2026-01-05 → 2025-12-06 A (-30d) | 2026-01-22 → 2026-01-29 A (+7d) |  | 0% → 100% | 378d → none |  |  |
| A9910 | Ventilation Unit-Fan | 2026-01-05 → 2025-12-06 A (-30d) | 2026-01-22 → 2026-01-29 A (+7d) |  | 0% → 100% | 378d → none |  |  |
| A9920 | Cable glands, lugs and accessories | 2026-01-05 → 2025-12-06 A (-30d) | 2026-01-28 → 2026-01-29 A (+1d) |  | 0% → 100% | 457d → none |  |  |
| MECH | **MECHANICAL** | 2026-01-05 → 2025-12-06 (-30d) | 2026-01-15 → 2026-01-29 (+14d) |  |  |  |  |  |
| A10000 | Surface Box for Gate valve | 2026-01-05 → 2025-12-06 A (-30d) | 2026-01-15 → 2026-01-29 A (+14d) |  | 0% → 100% | 74d → none |  |  |
| A10010 | Air Release Valves | 2026-01-05 → 2025-12-06 A (-30d) | 2026-01-15 → 2026-01-29 A (+14d) |  | 0% → 100% | 134d → none |  |  |
| A10020 | Washout Valves | 2026-01-05 → 2025-12-06 A (-30d) | 2026-01-15 → 2026-01-29 A (+14d) |  | 0% → 100% | 214d → none |  |  |
| A10030 | Connection Chamber | 2026-01-05 → 2025-12-06 A (-30d) | 2026-01-15 → 2026-01-29 A (+14d) |  | 0% → 100% | 188d → none |  |  |
| A10040 | HDPE House Connections Chambers | 2026-01-05 → 2025-12-06 A (-30d) | 2026-01-15 → 2026-01-29 A (+14d) |  | 0% → 100% | 103d → none |  |  |
| A10050 | Hose Bib | 2026-01-05 → 2025-12-06 A (-30d) | 2026-01-15 → 2026-01-29 A (+14d) |  | 0% → 100% | 74d → none |  |  |
| A10060 | PPR Pipes & Fittings | 2026-01-05 → 2025-12-06 A (-30d) | 2026-01-15 → 2026-01-29 A (+14d) |  | 0% → 100% | 144d → none |  |  |
| A10070 | Water Hammer Arrestor & TMV | 2026-01-05 → 2025-12-06 A (-30d) | 2026-01-15 → 2026-01-29 A (+14d) |  | 0% → 100% | 444d → none |  |  |
| A10080 | Sewage Manholes Cover with frame | 2026-01-05 → 2025-12-06 A (-30d) | 2026-01-15 → 2026-01-29 A (+14d) |  | 0% → 100% | 63d → none |  |  |
| A10090 | Irrigation Manholes Cover with frame | 2026-01-05 → 2025-12-06 A (-30d) | 2026-01-15 → 2026-01-29 A (+14d) |  | 0% → 100% | 133d → none |  |  |
| A10100 | Potable Manholes Cover with frame | 2026-01-05 → 2025-12-06 A (-30d) | 2026-01-15 → 2026-01-29 A (+14d) |  | 0% → 100% | 189d → none |  |  |
| A10110 | ICT Manholes Cover with frame | 2026-01-05 → 2025-12-06 A (-30d) | 2026-01-15 → 2026-01-29 A (+14d) |  | 0% → 100% | 245d → none |  |  |
| A10120 | Polyethylene Sheets | 2026-01-05 → 2025-12-06 A (-30d) | 2026-01-15 → 2026-01-29 A (+14d) |  | 0% → 100% | 21d → none |  |  |
| A10130 | Warning Tape | 2026-01-05 → 2025-12-06 A (-30d) | 2026-01-15 → 2026-01-29 A (+14d) |  | 0% → 100% | 83d → none |  |  |
| A10140 | Bitumen Paint (Bituminous Damp proofing) | 2026-01-05 → 2025-12-06 A (-30d) | 2026-01-15 → 2026-01-29 A (+14d) |  | 0% → 100% | 431d → none |  |  |
| A10150 | Anti Termite & Pest Contro; | 2026-01-05 → 2025-12-06 A (-30d) | 2026-01-15 → 2026-01-29 A (+14d) |  | 0% → 100% | 306d → none |  |  |
| A10160 | Warning tape | 2026-01-05 → 2025-12-06 A (-30d) | 2026-01-15 → 2026-01-29 A (+14d) |  | 0% → 100% | 68d → none |  |  |
| A10170 | Fire Hydrants | 2026-01-05 → 2025-12-06 A (-30d) | 2026-01-15 → 2026-01-29 A (+14d) |  | 0% → 100% | 189d → none |  |  |
| A10180 | OS & Y Gate valve | 2026-01-05 → 2025-12-06 A (-30d) | 2026-01-15 → 2026-01-29 A (+14d) |  | 0% → 100% | 264d → none |  |  |
| A10190 | Fire Extinguisher | 2026-01-05 → 2025-12-06 A (-30d) | 2026-01-15 → 2026-01-29 A (+14d) |  | 0% → 100% | 102d → none |  |  |
| A10200 | Fire Alarm systems & cable | 2026-01-05 → 2025-12-06 A (-30d) | 2026-01-15 → 2026-01-29 A (+14d) |  | 0% → 100% | 172d → none |  |  |
| A10210 | Water Heater | 2026-01-05 → 2025-12-06 A (-30d) | 2026-01-15 → 2026-01-29 A (+14d) |  | 0% → 100% | 374d → none |  |  |
| A10220 | Termination Kits | 2026-01-05 → 2025-12-06 A (-30d) | 2026-01-15 → 2026-01-29 A (+14d) |  | 0% → 100% | 454d → none |  |  |
| A9930 | Secondary Irrigation System | 2026-01-05 → 2025-12-06 A (-30d) | 2026-01-15 → 2026-01-29 A (+14d) |  | 0% → 100% | 193d → none |  |  |
| A9940 | HDPE Pipes & Fittings | 2026-01-05 → 2025-12-06 A (-30d) | 2026-01-15 → 2026-01-29 A (+14d) |  | 0% → 100% | 44d → none |  |  |
| A9950 | UPVC Pipes & Fittings | 2026-01-05 → 2025-12-06 A (-30d) | 2026-01-15 → 2026-01-29 A (+14d) |  | 0% → 100% | 183d → none |  |  |
| A9960 | GRP Pipes & Fittings | 2026-01-05 → 2025-12-06 A (-30d) | 2026-01-15 → 2026-01-29 A (+14d) |  | 0% → 100% | 107d → none |  |  |
| A9970 | Sanitory Ware, Plumbing Fixtures, Toilet Accessories | 2026-01-05 → 2025-12-06 A (-30d) | 2026-01-15 → 2026-01-29 A (+14d) |  | 0% → 100% | 362d → none |  |  |
| A9980 | Water Tank | 2026-01-05 → 2025-12-06 A (-30d) | 2026-01-15 → 2026-01-29 A (+14d) |  | 0% → 100% | 451d → none |  |  |
| A9990 | Gate Valves | 2026-01-05 → 2025-12-06 A (-30d) | 2026-01-15 → 2026-01-29 A (+14d) |  | 0% → 100% | 4d → none |  |  |
| MTD | **MATERIAL DELIVERY** | 2026-01-13 → 2026-08-11 (+210d) | 2027-11-03 → 2027-02-10 (-266d) |  |  |  |  |  |
| CVA | **CIVIL & ARCHITECTURE** | 2026-01-17 → 2026-08-11 (+206d) | 2027-08-31 → 2027-02-10 (-202d) |  |  |  |  |  |
| 1 | **Long Lead Items Civil** | 2026-01-17 → 2026-08-11 (+206d) | 2026-12-31 → 2027-01-25 (+25d) |  |  |  |  |  |
| A10230 | Sewer Manholes | 2026-01-17 → 2026-08-11 A (+206d) | 2026-06-28 → 2026-10-03 (+97d) | 140d → 90d | 0% → 99% | 1d → -31.9d |  | resources labor [900 h]; Physical Units [13617430 h] → labor [900 h]; Physical Units [2910126 h] |
| A10240 | Storm Manholes | 2026-01-17 → 2026-08-11 A (+206d) | 2026-04-25 → 2026-10-12 (+170d) | 85d → 90d | 0% → 90% | 0d → 22.5d |  | resources labor [900 h]; Physical Units [12502070 h] → labor [900 h]; Physical Units [2910126 h] |
| A10250 | Telecome Manholes | 2026-06-29 → 2026-10-03 (+96d) | 2026-12-31 → 2027-01-25 (+25d) | 160d → 98d |  | 1d → -31.9d |  | resources labor [980 h]; Physical Units [4034211 h] → labor [980 h]; Physical Units [2910126 h] |
| 2 | **Short Lead Item Civil** | 2026-01-17 → 2026-08-11 (+206d) | 2027-08-31 → 2027-02-10 (-202d) |  |  |  |  |  |
| A10260 | Lighting Poles Precast Foundation & Bolt | 2026-09-08 → 2026-08-11 A (-28d) | 2026-11-28 → 2026-09-28 A (-61d) |  | 0% → 100% | 170d → none | A9260, A10930 → A9260 | resources labor [700 h]; Physical Units [10250252 h] → labor [700 h]; Physical Units [2910126 h] |
| A10270 | Concrete curb | 2027-02-10 → 2026-08-11 A (-183d) | 2027-05-25 → 2026-11-09 (-197d) | 90d → 60d | 0% → 45% | 1d → -86.8d | A9270, A10330 SS, A10330 FF → A9270 | resources labor [600 h]; Physical Units [33953649 h] → labor [600 h]; Physical Units [2910126 h] |
| A10280 | Aggregate Sub-Grade & Basecourse | 2026-01-17 → 2026-08-11 A (+206d) | 2026-04-16 → 2026-10-07 (+174d) | 78d → 28d | 0% → 85% | 0d → -58d |  | resources labor [280 h]; Physical Units [32850395 h] → labor [280 h]; Physical Units [2910126 h] |
| A10290 | Asphalt | 2026-01-17 → 2026-08-11 A (+206d) | 2026-04-20 → 2026-10-18 (+181d) | 81d → 28d | 0% → 52% | 0d → -72d |  | was named Asphalt Binder; resources labor [280 h]; Physical Units [98686098 h] → labor [280 h]; Physical Units [2910126 h] |
| A10330 | Paving blocks 200*100*60 mm | 2027-02-10 → 2026-08-11 A (-183d) | 2027-05-13 → 2026-09-28 A (-227d) | 80d → 56d | 0% → 100% | 1d → none | A9330, A55800 → A9330 | resources labor [560 h]; Physical Units [32687710 h] → labor [560 h]; Physical Units [2910126 h] |
| A10340 | Blocks & Accessories | 2027-02-24 → 2026-08-11 A (-197d) | 2027-05-04 → 2026-09-28 A (-218d) | 60d → 28d | 0% → 100% | 41d → none | A9340, A10620, A55810 → A9340 | resources labor [280 h]; Physical Units [254304 h] → labor [280 h]; Physical Units [2910126 h] |

| ID | Task | Start | Finish | Duration | Complete | Total float | Predecessors | Other |
| --- | --- | --- | --- | --- | --- | --- | --- | --- |
| A10370 | Ductile iron steel cover | 2027-02-10 → 2026-08-11 A (-183d) | 2027-06-29 → 2026-09-28 A (-274d) | 120d → 42d | 0% → 100% | 1d → none | A9370, A10620, A10330 SS, A10330 FF → A9370 | resources labor [420 h]; Physical Units [29882.6 h] → labor [420 h]; Physical Units [2910126 h] |
| A10380 | Structural steel | 2026-02-02 → 2026-08-11 A (+190d) | 2026-06-21 → 2026-09-28 A (+99d) | 120d → 56d | 0% → 100% | 230d → none | A9380, A10620 → A9380 | resources labor [560 h]; Physical Units [119504 h] → labor [560 h]; Physical Units [2910126 h] |
| A10390 | Waterproofing Work | 2027-02-10 → 2026-08-11 A (-183d) | 2027-06-29 → 2026-09-28 A (-274d) | 120d → 70d | 0% → 100% | 7d → none | A9390, A10620, A10330 SS, A10330 FF → A9390 | resources labor [700 h]; Physical Units [62538.7 h] → labor [700 h]; Physical Units [2910126 h] |
| A10490 | Curbstone | 2027-05-26 → 2026-08-11 A (-288d) | 2027-08-26 → 2026-10-21 (-309d) | 80d → 28d | 0% → 40% | 2d → 144.22d | A9490, A10290, A10470, A10270 SS → A9490 | resources labor [280 h]; Physical Units [2292749 h] → labor [280 h]; Physical Units [2910126 h] |
| A10520 | Concrete Masonry Blocks | 2027-02-10 → 2026-08-11 A (-183d) | 2027-06-29 → 2026-10-04 (-268d) | 120d → 28d | 0% → 95% | 44d → 159.62d | A9520, A10620, A10330 SS, A10330 FF → A9520 | resources labor [280 h]; Physical Units [719151 h] → labor [280 h]; Physical Units [2910126 h] |
| A10530 | Block work Accessories | 2027-02-10 → 2026-08-11 A (-183d) | 2027-06-29 → 2026-09-28 A (-274d) | 120d → 21d | 0% → 100% | 44d → none | A9530, A10620, A10330 SS, A10330 FF → A9530 | resources labor [210 h]; Physical Units [254304 h] → labor [210 h]; Physical Units [2910126 h] |
| A10570 | Concrete repair & Curing material | 2026-10-11 → 2026-08-11 A (-61d) | 2026-10-26 → 2026-09-28 A (-28d) |  | 0% → 100% | 174d → none | A9570, A10620, A10560 → A9570 | resources labor [140 h]; Physical Units [7072.2 h] → labor [140 h]; Physical Units [2910126 h] |
| A10580 | Bonding agent | 2026-10-27 → 2026-08-11 A (-77d) | 2027-01-27 → 2026-09-28 A (-121d) | 80d → 14d | 0% → 100% | 183d → none | A9580, A10620, A10570 → A9580, A10570 | resources labor [140 h]; Physical Units [11787 h] → labor [140 h]; Physical Units [2910126 h] |
| A10590 | Concrete Mix for PC works | 2026-02-02 → 2026-08-11 A (+190d) | 2026-02-17 → 2026-09-28 A (+223d) |  | 0% → 100% | 172d → none | A9590, A10620 → A9590 | resources labor [140 h]; Physical Units [2260725 h] → labor [140 h]; Physical Units [2910126 h] |
| A10600 | Concrete Mix for RC works | 2026-02-18 → 2026-08-11 A (+174d) | 2026-03-05 → 2026-09-28 A (+207d) |  | 0% → 100% | 172d → none | A9600, A10620, A10590 → A9600, A10590 | resources labor [140 h]; Physical Units [29696935 h] → labor [140 h]; Physical Units [2910126 h] |
| A10610 | Reinforcement Steel | 2026-03-07 → 2026-08-11 A (+157d) | 2026-07-23 → 2026-09-28 A (+67d) | 120d → 14d | 0% → 100% | 172d → none | A9610, A10620, A10600 → A9610, A10600 | resources labor [140 h]; Physical Units [15042033 h] → labor [140 h]; Physical Units [2910126 h] |
| A10560 | Paint for Internal Areas | 2026-07-09 → 2026-09-21 A (+74d) | 2026-10-10 → 2026-11-30 (+51d) | 80d → 21d | 0% → 40% | 174d → 110.62d | A9560, A10620, A10550 → A9560, A10550 | resources labor [210 h]; Physical Units [207405 h] → labor [210 h]; Physical Units [2910126 h] |
| A10550 | Paint for External Areas | 2026-04-07 → 2026-09-27 A (+173d) | 2026-07-08 → 2026-11-15 (+130d) | 80d → 21d | 0% → 20% | 174d → 110.62d | A9550, A10620, A10540 → A9550, A10540 | resources labor [210 h]; Physical Units [3054462 h] → labor [210 h]; Physical Units [2910126 h] |
| A10300 | Traffic signage | 2026-01-17 → 2026-10-03 (+259d) | 2026-02-09 → 2026-11-28 (+292d) | 21d → 49d |  | 57d → -102.8d |  | resources labor [490 h]; Physical Units [3910302 h] → labor [490 h]; Physical Units [2910126 h] |
| A10350 | Access ladder | 2027-02-10 → 2026-10-03 (-130d) | 2027-06-17 → 2026-11-03 (-226d) | 110d → 28d |  | 2d → 133.02d | A9350, A10620, A10330 SS, A10330 FF → A9350 | resources labor [280 h]; Physical Units [79667 h] → labor [280 h]; Physical Units [2910126 h] |
| A10360 | Stanless steel Handril | 2027-02-10 → 2026-10-03 (-130d) | 2027-06-29 → 2026-11-19 (-222d) | 120d → 42d |  | 32d → 119.02d | A9360, A10620, A10330 SS, A10330 FF → A9360 | resources labor [420 h]; Physical Units [28487.6 h] → labor [420 h]; Physical Units [2910126 h] |
| A10400 | Waterproofing membrane | 2027-02-10 → 2026-10-03 (-130d) | 2027-06-29 → 2026-11-03 (-238d) | 120d → 28d |  | 7d → 133.02d | A9400, A10620, A10330 SS, A10330 FF → A9400 | resources labor [280 h]; Physical Units [33711 h] → labor [280 h]; Physical Units [2910126 h] |
| A10410 | Doors - (Glass & Sliding) | 2027-02-10 → 2026-10-03 (-130d) | 2027-06-29 → 2026-11-19 (-222d) | 120d → 42d |  | 22d → 119.02d | A9410, A10620, A10330 SS, A10330 FF → A9410 | resources labor [420 h]; Physical Units [479157 h] → labor [420 h]; Physical Units [2910126 h] |
| A10420 | Windows | 2027-02-10 → 2026-10-03 (-130d) | 2027-06-29 → 2026-12-06 (-205d) | 120d → 56d |  | 22d → 105.02d | A9420, A10620, A10330 SS, A10330 FF → A9420 | resources labor [560 h]; Physical Units [383614 h] → labor [560 h]; Physical Units [2910126 h] |
| A10430 | Paints & Epoxy | 2027-02-10 → 2026-10-03 (-130d) | 2027-06-29 → 2026-12-06 (-205d) | 120d → 56d |  | 30d → 105.02d | A9430, A10620, A10330 SS, A10330 FF → A9430 | resources labor [560 h]; Physical Units [10669 h] → labor [560 h]; Physical Units [2910126 h] |
| A10440 | Granite, ceramic | 2027-02-10 → 2026-10-03 (-130d) | 2027-06-29 → 2026-11-03 (-238d) | 120d → 28d |  | 15d → 133.02d | A9440, A10620, A10330 SS, A10330 FF → A9440 | resources labor [280 h]; Physical Units [238723 h] → labor [280 h]; Physical Units [2910126 h] |
| A10450 | Terrazzo tiles | 2027-02-10 → 2026-10-03 (-130d) | 2027-06-29 → 2026-11-03 (-238d) | 120d → 28d |  | 15d → 133.02d | A9450, A10620, A10330 SS, A10330 FF → A9450 | resources labor [280 h]; Physical Units [1397.6 h] → labor [280 h]; Physical Units [2910126 h] |
| A10460 | Fall ceiling | 2027-02-10 → 2026-10-03 (-130d) | 2027-06-29 → 2026-11-03 (-238d) | 120d → 28d |  | 16d → 133.02d | A9460, A10620, A10330 SS, A10330 FF → A9460 | resources labor [280 h]; Physical Units [342552 h] → labor [280 h]; Physical Units [2910126 h] |
| A10470 | Safety Bollards | 2027-02-10 → 2026-10-03 (-130d) | 2027-05-25 → 2026-11-03 (-203d) | 90d → 28d |  | 2d → 133.02d | A9470, A10620, A10330 SS, A10330 FF → A9470 | resources labor [280 h]; Physical Units [3367.7 h] → labor [280 h]; Physical Units [2910126 h] |
| A10480 | Geotextile Membrane | 2027-02-10 → 2026-10-03 (-130d) | 2027-06-29 → 2026-12-06 (-205d) | 120d → 56d |  | 7d → 105.02d | A9480, A10620, A10330 SS, A10330 FF → A9480 | resources labor [560 h]; Physical Units [33711 h] → labor [560 h]; Physical Units [2910126 h] |
| A10500 | Sidewalk interlock/Concrete Pavers | 2026-06-22 → 2026-10-03 (+103d) | 2026-11-08 → 2026-11-03 (-5d) | 120d → 28d |  | 88d → 133.02d | A9500, A10620, A10290, A10670 → A9500 | resources labor [280 h]; Physical Units [2868041 h] → labor [280 h]; Physical Units [2910126 h] |
| A10510 | Trees and Bushes-Landscape ( soft) | 2027-02-10 → 2026-10-03 (-130d) | 2027-06-29 → 2026-12-06 (-205d) | 120d → 56d |  | 52d → 105.02d | A9510, A10620, A10330 SS, A10330 FF → A9510 | resources labor [560 h]; Physical Units [822487 h] → labor [560 h]; Physical Units [2910126 h] |
| A10540 | Plaster to receive tile finish | 2026-02-02 → 2026-10-03 (+243d) | 2026-04-06 → 2026-10-26 (+203d) | 55d → 21d |  | 174d → 110.62d | A9540, A10620 → A9540 | resources labor [210 h]; Physical Units [1683.9 h] → labor [210 h]; Physical Units [2910126 h] |
| A10630 | Sand Cement Plaster for External Walls | 2026-07-25 → 2026-10-03 (+70d) | 2026-10-25 → 2026-10-18 (-7d) | 80d → 14d |  | 219d → 147.02d | A9630, A10620, A10610 → A9630, A10610 | resources labor [140 h]; Physical Units [3054462 h] → labor [140 h]; Physical Units [2910126 h] |
| A10640 | Porcelain Tiling | 2027-02-10 → 2026-10-03 (-130d) | 2027-06-29 → 2026-11-03 (-238d) | 120d → 28d |  | 15d → 133.02d | A9640, A10620, A10330 SS, A10330 FF → A9640 | resources labor [280 h]; Physical Units [31144.7 h] → labor [280 h]; Physical Units [2910126 h] |
| A10650 | False Ceilings | 2027-02-10 → 2026-10-03 (-130d) | 2027-06-29 → 2026-11-03 (-238d) | 120d → 28d |  | 16d → 133.02d | A9650, A10620, A10330 SS, A10330 FF → A9650 | resources labor [280 h]; Physical Units [342552 h] → labor [280 h]; Physical Units [2910126 h] |
| A10660 | Carpet Flooring | 2027-02-10 → 2026-10-03 (-130d) | 2027-06-29 → 2026-11-03 (-238d) | 120d → 28d |  | 50d → 133.02d | A9660, A10620, A10330 SS, A10330 FF → A9660 | resources labor [280 h]; Physical Units [585580 h] → labor [280 h]; Physical Units [2910126 h] |
| A10670 | Landscape (Hard ) | 2026-02-02 → 2026-10-03 (+243d) | 2026-06-21 → 2026-11-19 (+151d) | 120d → 42d |  | 88d → 119.02d | A9670, A10620 → A9670 | resources labor [420 h]; Physical Units [586372 h] → labor [420 h]; Physical Units [2910126 h] |
| A10310 | Plant and trees | 2026-11-29 → 2026-10-18 (-42d) | 2027-02-17 → 2026-11-22 (-87d) | 70d → 30d |  | 170d → 244.88d |  | resources labor [300 h]; Physical Units [9294598 h] → labor [300 h]; Physical Units [2910126 h] |
| A10320 | Garbage Bin, trash & litter | 2027-02-18 → 2026-11-22 (-88d) | 2027-04-24 → 2027-01-26 (-88d) |  |  | 170d → 244.88d |  | resources labor [560 h]; Physical Units [26685.9 h] → labor [560 h]; Physical Units [2910126 h] |
| A10620 | Sand Cement Plaster for Internal Walls | 2026-01-17 → 2027-01-25 (+373d) | 2026-02-01 → 2027-02-10 (+374d) |  |  | 88d → 48.12d | A9620 → A9620, A10250 | resources labor [140 h]; Physical Units [125226 h] → labor [140 h]; Physical Units [2910126 h] |
| ELE | **ELECTRICAL** | 2026-01-17 → 2026-08-11 (+206d) | 2027-11-03 → 2027-02-09 (-267d) |  |  |  |  |  |
| 1 | **Long Lead Items Elec** | 2026-01-17 → 2026-08-11 (+206d) | 2027-11-03 → 2027-02-09 (-267d) |  |  |  |  |  |
| A10710 | Unit Substation & RMU | 2026-01-29 → 2026-08-11 A (+194d) | 2026-06-08 → 2026-09-26 A (+110d) |  | 0% → 100% | 70d → none |  | resources labor [1120 h]; Physical Units [1721364 h] → labor [1120 h]; Physical Units [5727128 h] |
| A10720 | MV Cables | 2026-01-17 → 2026-08-11 A (+206d) | 2026-07-30 → 2026-10-10 (+72d) | 168d → 140d | 0% → 95% | 0d → -60.31d |  | resources labor [1400 h]; Physical Units [38633043 h] → labor [1400 h]; Physical Units [28915011 h] |
| A10730 | LV Cables | 2027-03-02 → 2026-08-11 A (-203d) | 2027-07-10 → 2026-09-26 A (-287d) |  | 0% → 100% | 1d → none | A9730, A55820 → A9730 | resources labor [1120 h]; Physical Units [9835014 h] → labor [1120 h]; Physical Units [5727128 h] |
| A10740 | LV Wire | 2027-03-02 → 2026-08-11 A (-203d) | 2027-07-10 → 2026-09-26 A (-287d) |  | 0% → 100% | 32d → none | A9740, A55820 → A9740 | resources labor [1120 h]; Physical Units [94296.4 h] → labor [1120 h]; Physical Units [5727128 h] |
| A10750 | Electrical Panels | 2027-03-02 → 2026-08-11 A (-203d) | 2027-07-10 → 2026-09-26 A (-287d) |  | 0% → 100% | 44d → none | A9750, A55820 → A9750 | resources labor [1120 h]; Physical Units [214019 h] → labor [1120 h]; Physical Units [5727128 h] |
| A10760 | LV Conductors (part of the panels) | 2027-03-02 → 2026-08-11 A (-203d) | 2027-07-10 → 2026-09-26 A (-287d) |  | 0% → 100% | 32d → none | A9760, A55820 → A9760 | resources labor [1120 h]; Physical Units [34926.7 h] → labor [1120 h]; Physical Units [5727128 h] |
| A10770 | Underground Ducts-UPVC | 2026-01-29 → 2026-08-11 A (+194d) | 2026-06-08 → 2026-09-26 A (+110d) |  | 0% → 100% | 17d → none |  | resources labor [1120 h]; Physical Units [12386.5 h] → labor [1120 h]; Physical Units [5727128 h] |
| A10820 | PVC & EMT conduits | 2027-03-02 → 2026-08-11 A (-203d) | 2027-06-26 → 2026-09-26 A (-273d) | 100d → 112d | 0% → 100% | 0d → none | A9820 FS+14d, A55820 → A9820 FS+14d | resources labor [1120 h]; Physical Units [110067 h] → labor [1120 h]; Physical Units [5727128 h] |
| A10890 | Drain & Clean Out | 2027-03-02 → 2026-08-11 A (-203d) | 2027-07-10 → 2026-09-26 A (-287d) |  | 0% → 100% | 49d → none | A9890, A55820 → A9890 | resources labor [1120 h]; Physical Units [52297.4 h] → labor [1120 h]; Physical Units [5727128 h] |
| A10810 | Street Lighting Poles | 2027-07-11 → 2026-09-22 A (-292d) | 2027-08-25 → 2026-12-06 (-262d) | 40d → 112d | 0% → 50% | 1d → -109.31d | A9810 FS+14d, A10730 → A9810 FS+14d | resources labor [1120 h]; Physical Units [10250252 h] → labor [1120 h]; Physical Units [5727128 h] |
| A10690 | Public address System | 2027-03-02 → 2026-10-03 (-150d) | 2027-05-22 → 2026-12-22 (-151d) |  |  | 91d → -123.31d | A9690, A55820 → A9690 | resources labor [700 h]; Physical Units [157310 h] → labor [700 h]; Physical Units [5727128 h] |
| A10700 | Fire Pump | 2027-03-02 → 2026-10-03 (-150d) | 2027-05-22 → 2026-12-22 (-151d) |  |  | 75d → -123.31d | A9700 FS+14d, A55820 → A9700 FS+14d | resources labor [700 h]; Physical Units [41123.3 h] → labor [700 h]; Physical Units [5727128 h] |
| A10800 | Street Lights Lighting Fixtures | 2027-07-11 → 2026-10-03 (-281d) | 2027-11-03 → 2027-02-09 (-267d) | 100d → 112d |  | 1d → -165.31d | A9800 FS+14d, A10810 SS → A9800 FS+14d | resources labor [1120 h]; Physical Units [3129751 h] → labor [1120 h]; Physical Units [5727128 h] |
| A10900 | Split AC Package | 2027-03-02 → 2026-10-03 (-150d) | 2027-07-10 → 2027-02-09 (-151d) |  |  | 33d → -165.31d | A9900, A55820 → A9900 | resources labor [1120 h]; Physical Units [294440 h] → labor [1120 h]; Physical Units [5727128 h] |
| A10910 | Ventilation Unit-Fan | 2027-03-02 → 2026-10-03 (-150d) | 2027-07-10 → 2027-02-09 (-151d) |  |  | 33d → -165.31d | A9910, A55820 → A9910 | resources labor [1120 h]; Physical Units [4135.6 h] → labor [1120 h]; Physical Units [5727128 h] |
| 2 | **Short Lead Item Elec** | 2027-03-02 → 2026-08-11 (-203d) | 2027-08-17 → 2027-02-09 (-189d) |  |  |  |  |  |
| A10780 | Underground Ducts-HDPE | 2027-03-02 → 2026-08-11 A (-203d) | 2027-06-14 → 2026-09-26 A (-261d) | 90d → 42d | 0% → 100% | 14d → none | A9780, A10820 SS → A9780 | resources labor [420 h]; Physical Units [2357.4 h] → labor [420 h]; Physical Units [5727128 h] |
| A10840 | Wiring Devices and Switches | 2027-06-27 → 2026-08-11 A (-320d) | 2027-08-17 → 2026-09-26 A (-325d) | 45d → 112d | 0% → 100% | 0d → none | A9840, A10820 → A9840 | resources labor [1120 h]; Physical Units [75056.5 h] → labor [1120 h]; Physical Units [5727128 h] |
| A10860 | Earthing System | 2027-06-27 → 2026-08-11 A (-320d) | 2027-08-17 → 2026-09-26 A (-325d) | 45d → 70d | 0% → 100% | 0d → none | A9860, A10820 → A9860 | resources labor [700 h]; Physical Units [88542.6 h] → labor [700 h]; Physical Units [5727128 h] |
| A10880 | GI duct work with insulation & Support | 2027-03-02 → 2026-08-11 A (-203d) | 2027-06-02 → 2026-09-26 A (-249d) | 80d → 70d | 0% → 100% | 24d → none | A9880, A10820 SS → A9880 | resources labor [700 h]; Physical Units [190950 h] → labor [700 h]; Physical Units [5727128 h] |
| A10920 | Cable glands, lugs and accessories | 2027-06-27 → 2026-08-11 A (-320d) | 2027-07-28 → 2026-09-26 A (-305d) |  | 0% → 100% | 17d → none | A9920, A10820 → A9920 | resources labor [280 h]; Physical Units [12730 h] → labor [280 h]; Physical Units [5727128 h] |
| A10790 | External Lighting Fixtures | 2027-06-27 → 2026-10-03 (-267d) | 2027-08-17 → 2026-12-06 (-254d) | 45d → 56d |  | 0d → -109.31d | A9790 FS+14d, A10820 → A9790 FS+14d | resources labor [560 h]; Physical Units [118935 h] → labor [560 h]; Physical Units [5727128 h] |
| A10830 | LIGHTING FIXTURES (buildings Internal) | 2027-06-27 → 2026-10-03 (-267d) | 2027-08-17 → 2026-12-22 (-238d) | 45d → 70d |  | 0d → -123.31d | A9830, A10820 → A9830 | resources labor [700 h]; Physical Units [756186 h] → labor [700 h]; Physical Units [5727128 h] |
| A10850 | DALI Cabinet (external lighting control) | 2027-06-27 → 2026-10-03 (-267d) | 2027-08-17 → 2027-02-09 (-189d) | 45d → 112d |  | 0d → -165.31d | A9850, A10820 → A9850 | resources labor [1120 h]; Physical Units [9958.4 h] → labor [1120 h]; Physical Units [5727128 h] |
| MECH | **MECHANICAL** | 2026-01-13 → 2026-08-11 (+210d) | 2027-08-23 → 2027-01-16 (-219d) |  |  |  |  |  |
| A10930 | Secondary Irrigation System | 2026-05-03 → 2026-08-11 A (+100d) | 2026-09-07 → 2026-10-21 (+44d) | 110d → 84d | 0% → 80% | 102d → 64.2d | A9930, A11200 SS → A9930 | resources labor [840 h]; Physical Units [8957826 h] → labor [840 h]; Physical Units [5800851 h] |
| A10940 | HDPE Pipes & Fittings | 2026-01-13 → 2026-08-11 A (+210d) | 2026-03-18 → 2026-09-26 A (+192d) |  | 0% → 100% | 44d → none |  | resources labor [560 h]; Physical Units [33075564 h] → labor [560 h]; Physical Units [24095842 h] |
| A10950 | UPVC Pipes & Fittings | 2026-01-17 → 2026-08-11 A (+206d) | 2026-02-17 → 2026-09-26 A (+221d) |  | 0% → 100% | 183d → none |  | resources labor [280 h]; Physical Units [11468093 h] → labor [280 h]; Physical Units [24095842 h] |
| A10960 | GRP Pipes & Fittings | 2026-01-17 → 2026-08-11 A (+206d) | 2026-03-05 → 2026-09-26 A (+205d) |  | 0% → 100% | 107d → none |  | resources labor [420 h]; Physical Units [35084075 h] → labor [420 h]; Physical Units [36143764 h] |
| A11050 | Hose Bib | 2026-03-19 → 2026-08-21 A (+155d) | 2026-06-08 → 2026-09-28 A (+112d) |  | 0% → 100% | 21d → none |  | resources labor [700 h]; Physical Units [2889.5 h] → labor [700 h]; Physical Units [5800851 h] |
| A11060 | PPR Pipes & Fittings | 2026-06-09 → 2026-08-21 A (+73d) | 2026-10-26 → 2026-09-28 A (-28d) | 120d → 70d | 0% → 100% | 21d → none |  | resources labor [700 h]; Physical Units [45638.1 h] → labor [700 h]; Physical Units [5800851 h] |
| A11080 | Sewage Manholes Cover with frame | 2026-01-17 → 2026-08-21 A (+216d) | 2026-04-07 → 2026-10-14 (+190d) |  | 0% → 85% | 63d → 27.5d |  | resources labor [700 h]; Physical Units [3367.7 h] → labor [700 h]; Physical Units [5800851 h] |

| ID | Task | Start | Finish | Duration | Complete | Total float | Predecessors | Other |
| --- | --- | --- | --- | --- | --- | --- | --- | --- |
| A11090 | Irrigation Manholes Cover with frame | 2026-04-08 → 2026-08-21 A (+135d) | 2026-06-11 → 2026-10-12 (+123d) |  | 0% → 85% | 63d → 72.6d | A10090, A11080 → A10090 | resources labor [560 h]; Physical Units [3367.7 h] → labor [560 h]; Physical Units [5800851 h] |
| A11100 | Potable Manholes Cover with frame | 2026-06-13 → 2026-08-21 A (+69d) | 2026-08-16 → 2026-10-12 (+57d) |  | 0% → 85% | 63d → 52.1d | A10100, A11090 → A10100 | resources labor [560 h]; Physical Units [3367.7 h] → labor [560 h]; Physical Units [5800851 h] |
| A11120 | Polyethylene Sheets | 2026-01-13 → 2026-08-21 A (+220d) | 2026-03-18 → 2026-09-26 A (+192d) |  | 0% → 100% | 21d → none |  | resources labor [560 h]; Physical Units [30579 h] → labor [560 h]; Physical Units [5800851 h] |
| A11130 | Warning Tape | 2026-01-17 → 2026-08-21 A (+216d) | 2026-02-01 → 2026-09-26 A (+237d) |  | 0% → 100% | 83d → none |  | resources labor [140 h]; Physical Units [3367.7 h] → labor [140 h]; Physical Units [5800851 h] |
| A11140 | Bitumen Paint (Bituminous Damp proofing) | 2027-03-02 → 2026-08-21 A (-193d) | 2027-04-05 → 2026-10-05 (-182d) | 30d → 14d | 0% → 85% | 80d → 44.4d | A10140, A10820 SS → A10140 | resources labor [140 h]; Physical Units [62538.7 h] → labor [140 h]; Physical Units [5800851 h] |
| A11150 | Anti Termite & Pest Contro; | 2026-03-07 → 2026-08-21 A (+167d) | 2026-03-30 → 2026-09-26 A (+180d) |  | 0% → 100% | 264d → none | A10150, A10600 → A10150 | resources labor [210 h]; Physical Units [16165.1 h] → labor [210 h]; Physical Units [5800851 h] |
| A11160 | Warning tape | 2026-01-17 → 2026-08-21 A (+216d) | 2026-02-09 → 2026-09-26 A (+229d) |  | 0% → 100% | 68d → none |  | resources labor [210 h]; Physical Units [3367.7 h] → labor [210 h]; Physical Units [5800851 h] |
| A11170 | Fire Hydrants | 2026-02-09 → 2026-08-21 A (+193d) | 2026-05-30 → 2026-10-26 (+149d) | 95d → 84d | 0% → 75% | 189d → 39.5d |  | resources labor [840 h]; Physical Units [10027476 h] → labor [840 h]; Physical Units [5800851 h] |
| A11220 | Termination Kits | 2027-06-27 → 2026-08-21 A (-310d) | 2027-08-14 → 2026-09-28 A (-320d) |  | 0% → 100% | 3d → none | A10220, A11090, A10820 → A10220 | resources labor [420 h]; Physical Units [3367.7 h] → labor [420 h]; Physical Units [5800851 h] |
| A10970 | Sanitory Ware, Plumbing Fixtures, Toilet Accessories | 2027-03-02 → 2026-10-03 (-150d) | 2027-08-23 → 2026-12-06 (-260d) | 150d → 56d |  | 11d → 105.02d | A9970, A11000, A10820 SS → A9970 | resources labor [560 h]; Physical Units [54486.5 h] → labor [560 h]; Physical Units [5800851 h] |
| A10980 | Water Tank | 2027-06-27 → 2026-10-03 (-267d) | 2027-08-17 → 2026-12-22 (-238d) | 45d → 70d |  | 0d → 91.02d | A9980, A11200, A10820 → A9980 | resources labor [700 h]; Physical Units [63983.5 h] → labor [700 h]; Physical Units [5800851 h] |
| A10990 | Gate Valves | 2026-01-17 → 2026-10-03 (+259d) | 2026-04-07 → 2026-12-22 (+259d) |  |  | 4d → -9.5d |  | resources labor [700 h]; Physical Units [1412829 h] → labor [700 h]; Physical Units [5800851 h] |
| A11000 | Surface Box for Gate valve | 2026-04-08 → 2026-10-03 (+178d) | 2026-06-16 → 2026-12-10 (+177d) |  |  | 4d → 0.5d | A10000, A10990 → A10000 | resources labor [700 h]; Physical Units [167888 h] → labor [700 h]; Physical Units [5800851 h] |
| A11010 | Air Release Valves | 2026-06-17 → 2026-10-03 (+108d) | 2026-09-17 → 2027-01-03 (+108d) |  |  | 4d → -19.5d | A10010, A11000 → A10010 | resources labor [900 h]; Physical Units [4836.1 h] → labor [900 h]; Physical Units [5800851 h] |
| A11020 | Washout Valves | 2026-09-19 → 2026-10-03 (+14d) | 2026-11-15 → 2026-11-29 (+14d) |  |  | 4d → 10.5d | A10020, A11010 → A10020 | resources labor [900 h]; Physical Units [329189 h] → labor [900 h]; Physical Units [5800851 h] |
| A11030 | Connection Chamber | 2026-02-21 → 2026-10-03 (+224d) | 2026-05-12 → 2026-12-22 (+224d) |  |  | 188d → -9.5d |  | resources labor [700 h]; Physical Units [3367.7 h] → labor [700 h]; Physical Units [5800851 h] |
| A11040 | HDPE House Connections Chambers | 2026-02-21 → 2026-10-03 (+224d) | 2026-05-12 → 2026-12-22 (+224d) |  |  | 103d → 202.32d |  | resources labor [700 h]; Physical Units [3367.7 h] → labor [700 h]; Physical Units [5800851 h] |
| A11070 | Water Hammer Arrestor & TMV | 2027-05-23 → 2026-10-03 (-232d) | 2027-06-15 → 2026-10-26 (-232d) |  |  | 23d → 222.32d | A10070, A11210, A10820 SS → A10070 | resources labor [210 h]; Physical Units [3367.7 h] → labor [210 h]; Physical Units [5800851 h] |
| A11110 | ICT Manholes Cover with frame | 2026-08-17 → 2026-10-03 (+47d) | 2026-10-20 → 2026-12-06 (+47d) |  |  | 63d → -5d | A10110, A11100 → A10110 | resources labor [560 h]; Physical Units [3367.7 h] → labor [560 h]; Physical Units [5800851 h] |
| A11180 | OS & Y Gate valve | 2026-11-16 → 2026-10-03 (-44d) | 2026-12-31 → 2026-12-22 (-9d) | 40d → 70d |  | 4d → -9.5d | A10180, A11020 → A10180 | resources labor [700 h]; Physical Units [183184 h] → labor [700 h]; Physical Units [5800851 h] |
| A11200 | Fire Alarm systems & cable | 2026-05-03 → 2026-10-03 (+153d) | 2026-07-22 → 2026-12-22 (+153d) |  |  | 102d → 91.02d | A10200 FS+21d, A11190 → A10200 FS+21d | resources labor [700 h]; Physical Units [96913.1 h] → labor [700 h]; Physical Units [5800851 h] |
| A11210 | Water Heater | 2027-03-02 → 2026-10-03 (-150d) | 2027-05-22 → 2026-12-22 (-151d) |  |  | 23d → 91.02d | A10210, A11200, A10820 SS → A10210 FS+21d | resources labor [700 h]; Physical Units [15151.4 h] → labor [700 h]; Physical Units [5800851 h] |
| A11190 | Fire Extinguisher | 2026-02-10 → 2026-10-27 (+259d) | 2026-05-02 → 2027-01-16 (+259d) |  |  | 102d → 70.02d | A10190 FS+21d → A10190 FS+21d, A11170 | resources labor [700 h]; Physical Units [10318.7 h] → labor [700 h]; Physical Units [5800851 h] |
| CON | **CONSTRUCTION** | 2026-01-03 → 2025-12-06 (-28d) | 2027-12-01 → 2027-11-25 (-6d) |  |  |  |  |  |
| Zone A | **Zone A** |  | 2027-11-17 → 2027-06-02 (-168d) |  |  |  |  |  |
| PREP | **EARTH WORK** |  | 2026-07-08 → 2026-10-27 (+111d) |  |  |  |  |  |
| R1 | **Road 1** | 2026-01-03 → 2026-01-20 (+17d) | 2026-03-12 → 2026-10-03 (+205d) |  |  |  |  |  |
| DE | **Demolition** | 2026-01-03 → 2026-08-15 (+224d) | 2026-01-19 → 2026-09-20 (+244d) |  |  |  |  |  |
| A56630 | Demolition of existing Asphalt | 2026-01-03 → 2026-08-15 A (+224d) | 2026-01-07 → 2026-09-20 A (+256d) |  | 0% → 100% | 2d → none |  |  |
| A56640 | Compaction of existing aggregate base course layer | 2026-01-08 → 2026-08-15 A (+219d) | 2026-01-13 → 2026-09-20 A (+250d) |  | 0% → 100% | 30d → none |  |  |
| A56650 | Demolition of existing Kerbs | 2026-01-14 → 2026-08-15 A (+213d) | 2026-01-19 → 2026-09-20 A (+244d) |  | 0% → 100% | 30d → none |  |  |
| EW | **Earth Work** |  | 2026-03-12 → 2026-10-03 (+205d) |  |  |  |  |  |
| A56600 | Earthworks - Cut Excavation | 2026-01-20 A | 2026-02-04 → 2026-09-20 A (+228d) |  | 0% → 100% | 30d → none |  |  |
| A56610 | Earthworks - Fill & Compaction | 2026-02-05 → 2026-08-21 A (+197d) | 2026-03-01 → 2026-10-03 (+216d) |  | 0% → 98% | 30d → -54.42d |  |  |
| A56620 | Subgrade | 2026-03-02 → 2026-08-21 A (+172d) | 2026-03-12 → 2026-10-03 (+205d) |  | 0% → 98% | 30d → -54.42d |  |  |
| R2 | **Road 2** | 2026-01-08 → 2026-02-05 (+28d) | 2026-03-21 → 2026-10-03 (+196d) |  |  |  |  |  |
| DE | **Demolition** | 2026-01-08 → 2026-08-15 (+219d) | 2026-02-04 → 2026-09-20 (+228d) |  |  |  |  |  |
| A59230 | Demolition of existing Asphalt | 2026-01-08 → 2026-08-15 A (+219d) | 2026-01-21 → 2026-09-20 A (+242d) |  | 0% → 100% | 2d → none |  |  |
| A59240 | Compaction of existing aggregate base course layer | 2026-01-22 → 2026-08-15 A (+205d) | 2026-01-29 → 2026-09-20 A (+234d) |  | 0% → 100% | 31d → none |  |  |
| A59250 | Demolition of existing Kerbs | 2026-01-31 → 2026-08-15 A (+196d) | 2026-02-04 → 2026-09-20 A (+228d) |  | 0% → 100% | 31d → none |  |  |
| EW | **Earth Work** |  | 2026-03-21 → 2026-10-03 (+196d) |  |  |  |  |  |
| A59200 | Earthworks - Cut Excavation | 2026-02-05 A | 2026-02-21 → 2026-09-20 A (+211d) |  | 0% → 100% | 31d → none |  |  |
| A59210 | Earthworks - Fill & Compaction | 2026-02-22 → 2026-08-21 A (+180d) | 2026-03-09 → 2026-10-03 (+208d) |  | 0% → 99% | 31d → -53.8d |  |  |
| A59220 | Subgrade | 2026-03-10 → 2026-08-21 A (+164d) | 2026-03-21 → 2026-10-03 (+196d) |  | 0% → 99% | 31d → -53.8d |  |  |
| 3 | **Road 3** | 2026-01-22 → 2026-02-09 (+18d) | 2026-03-21 → 2026-10-07 (+200d) |  |  |  |  |  |
| DE | **Demolition** | 2026-01-22 → 2026-08-15 (+205d) | 2026-02-08 → 2026-09-20 (+224d) |  |  |  |  |  |
| A59290 | Demolition of existing Asphalt | 2026-01-22 → 2026-08-15 A (+205d) | 2026-01-27 → 2026-09-20 A (+236d) |  | 0% → 100% | 2d → none |  |  |
| A59300 | Compaction of existing aggregate base course layer | 2026-01-28 → 2026-08-15 A (+199d) | 2026-02-02 → 2026-09-20 A (+230d) |  | 0% → 100% | 2d → none |  |  |
| A59310 | Demolition of existing Kerbs | 2026-02-03 → 2026-08-15 A (+193d) | 2026-02-08 → 2026-09-20 A (+224d) |  | 0% → 100% | 2d → none |  |  |
| EW | **Earth Work** |  | 2026-03-21 → 2026-10-07 (+200d) |  |  |  |  |  |
| A59260 | Earthworks - Cut Excavation | 2026-02-09 A | 2026-02-24 → 2026-09-20 A (+208d) |  | 0% → 100% | 2d → none |  |  |
| A59270 | Earthworks - Fill & Compaction | 2026-02-25 → 2026-08-21 A (+177d) | 2026-03-12 → 2026-10-03 (+205d) |  | 0% → 98% | 39d → -57.9d |  |  |
| A59280 | Subgrade | 2026-03-14 → 2026-08-21 A (+160d) | 2026-03-21 → 2026-10-07 (+200d) |  | 0% → 42% | 39d → -57.9d |  |  |
| R4 | **Road 4** |  | 2026-04-01 → 2026-10-27 (+209d) |  |  |  |  |  |
| EW | **Earth Work** |  | 2026-04-01 → 2026-10-27 (+209d) |  |  |  |  |  |
| A59320 | Earthworks - Cut Excavation | 2026-02-25 A | 2026-03-02 → 2026-09-20 A (+202d) |  | 0% → 100% | 2d → none |  |  |
| A59340 | Subgrade | 2026-03-28 → 2026-08-21 A (+146d) | 2026-04-01 → 2026-10-27 (+209d) |  | 0% → 89% | 35d → -73.61d |  |  |
| A59330 | Earthworks - Fill & Compaction | 2026-03-03 → 2026-10-03 (+214d) | 2026-03-26 → 2026-10-26 (+214d) |  |  | 35d → -73.61d |  |  |
| R5 | **Road 5** | 2026-03-03 → 2026-03-15 (+12d) | 2026-04-05 → 2026-10-06 (+184d) |  |  |  |  |  |
| EW | **Earth Work** | 2026-03-03 → 2026-03-15 (+12d) | 2026-04-05 → 2026-10-06 (+184d) |  |  |  |  |  |
| A59350 | Earthworks - Cut Excavation | 2026-03-03 → 2026-03-15 A (+12d) | 2026-03-18 → 2026-09-20 A (+186d) |  | 0% → 100% | 2d → none |  |  |
| A59360 | Earthworks - Fill & Compaction | 2026-03-19 → 2026-08-21 A (+155d) | 2026-03-30 → 2026-10-03 (+187d) |  | 0% → 99% | 38d → -84.1d |  |  |
| A59370 | Subgrade | 2026-03-31 → 2026-08-21 A (+143d) | 2026-04-05 → 2026-10-06 (+184d) |  | 0% → 40% | 38d → -55.04d |  |  |
| R6 | **Road 6** | 2026-03-19 → 2026-03-15 (-4d) | 2026-04-27 → 2026-10-10 (+166d) |  |  |  |  |  |
| EW | **Earth Work** | 2026-03-19 → 2026-03-15 (-4d) | 2026-04-27 → 2026-10-10 (+166d) |  |  |  |  |  |
| A59380 | Earthworks - Cut Excavation | 2026-03-19 → 2026-03-15 A (-4d) | 2026-04-04 → 2026-09-20 A (+169d) |  | 0% → 100% | 2d → none |  |  |
| A59390 | Earthworks - Fill & Compaction | 2026-04-05 → 2026-08-21 A (+138d) | 2026-04-15 → 2026-10-03 (+171d) |  | 0% → 97% | 2d → -93.3d |  |  |
| A59400 | Subgrade | 2026-04-16 → 2026-08-29 A (+135d) | 2026-04-27 → 2026-10-10 (+166d) |  | 0% → 40% | 25d → -54.04d |  |  |
| R7 | **Road 7** | 2026-04-05 → 2026-03-15 (-21d) | 2026-05-03 → 2026-10-03 (+153d) |  |  |  |  |  |
| EW | **Earth Work** | 2026-04-05 → 2026-03-15 (-21d) | 2026-05-03 → 2026-10-03 (+153d) |  |  |  |  |  |

| ID | Task | Start | Finish | Complete | Total float |
| --- | --- | --- | --- | --- | --- |
| A59410 | Earthworks - Cut Excavation | 2026-04-05 → 2026-03-15 A (-21d) | 2026-04-09 → 2026-09-20 A (+164d) | 0% → 100% | 19d → none |
| A59430 | Subgrade | 2026-04-22 → 2026-08-15 A (+115d) | 2026-05-03 → 2026-09-20 A (+140d) | 0% → 100% | 26d → none |
| A59420 | Earthworks - Fill & Compaction | 2026-04-11 → 2026-08-29 A (+140d) | 2026-04-21 → 2026-10-03 (+165d) | 0% → 95% | 26d → -44.34d |
| R8 | **Road 8** | 2026-04-11 → 2026-03-15 (-27d) | 2026-05-18 → 2026-09-20 (+125d) |  |  |
| EW | **Earth Work** | 2026-04-11 → 2026-03-15 (-27d) | 2026-05-18 → 2026-09-20 (+125d) |  |  |
| A59440 | Earthworks - Cut Excavation | 2026-04-11 → 2026-03-15 A (-27d) | 2026-04-15 → 2026-09-20 A (+158d) | 0% → 100% | 19d → none |
| A59450 | Earthworks - Fill & Compaction | 2026-04-16 → 2026-08-15 A (+121d) | 2026-05-10 → 2026-09-20 A (+133d) | 0% → 100% | 19d → none |
| A59460 | Subgrade | 2026-05-07 → 2026-08-15 A (+100d) | 2026-05-18 → 2026-09-20 A (+125d) | 0% → 100% | 19d → none |
| R9 | **Road 9** |  | 2026-02-23 → 2026-09-20 (+209d) |  |  |
| EW | **Earth Work** |  | 2026-02-23 → 2026-09-20 (+209d) |  |  |
| A59470 | Earthworks - Cut Excavation | 2026-01-03 A | 2026-01-18 → 2026-09-20 A (+245d) | 0% → 100% | 30d → none |
| A59480 | Earthworks - Fill & Compaction | 2026-01-19 → 2026-08-15 A (+208d) | 2026-02-11 → 2026-09-20 A (+221d) | 0% → 100% | 97d → none |
| A59490 | Subgrade | 2026-02-12 → 2026-08-15 A (+184d) | 2026-02-23 → 2026-09-20 A (+209d) | 0% → 100% | 97d → none |
| R10 | **Road10** |  | 2026-03-11 → 2026-10-03 (+206d) |  |  |
| EW | **Earth Work** |  | 2026-03-11 → 2026-10-03 (+206d) |  |  |
| A59500 | Earthworks - Cut Excavation | 2026-01-19 A | 2026-02-03 → 2026-09-20 A (+229d) | 0% → 100% | 30d → none |
| A59520 | Subgrade | 2026-03-01 → 2026-08-15 A (+167d) | 2026-03-11 → 2026-09-20 A (+193d) | 0% → 100% | 89d → none |
| A59510 | Earthworks - Fill & Compaction | 2026-02-04 → 2026-08-29 A (+206d) | 2026-02-28 → 2026-10-03 (+217d) | 0% → 97% | 89d → -44.35d |
| R11 | **Road11** |  | 2026-03-28 → 2026-09-20 (+176d) |  |  |
| EW | **Earth Work** |  | 2026-03-28 → 2026-09-20 (+176d) |  |  |
| A59530 | Earthworks - Cut Excavation | 2026-02-04 A | 2026-02-19 → 2026-09-20 A (+213d) | 0% → 100% | 30d → none |
| A59540 | Earthworks - Fill & Compaction | 2026-02-21 → 2026-08-15 A (+175d) | 2026-03-16 → 2026-09-20 A (+188d) | 0% → 100% | 82d → none |
| A59550 | Subgrade | 2026-03-17 → 2026-08-15 A (+151d) | 2026-03-28 → 2026-09-20 A (+176d) | 0% → 100% | 82d → none |
| R12 | **Road12** |  | 2026-04-13 → 2026-09-20 (+160d) |  |  |
| EW | **Earth Work** |  | 2026-04-13 → 2026-09-20 (+160d) |  |  |
| A59560 | Earthworks - Cut Excavation | 2026-02-21 A | 2026-03-08 → 2026-09-20 A (+196d) | 0% → 100% | 30d → none |
| A59570 | Earthworks - Fill & Compaction | 2026-03-09 → 2026-08-15 A (+159d) | 2026-04-01 → 2026-09-20 A (+172d) | 0% → 100% | 68d → none |
| A59580 | Subgrade | 2026-04-02 → 2026-08-15 A (+135d) | 2026-04-13 → 2026-09-20 A (+160d) | 0% → 100% | 68d → none |
| R13 | **Road13** | 2026-03-09 → 2026-03-15 (+6d) | 2026-04-29 → 2026-09-20 (+144d) |  |  |
| EW | **Earth Work** | 2026-03-09 → 2026-03-15 (+6d) | 2026-04-29 → 2026-09-20 (+144d) |  |  |
| A59590 | Earthworks - Cut Excavation | 2026-03-09 → 2026-03-15 A (+6d) | 2026-03-24 → 2026-09-20 A (+180d) | 0% → 100% | 30d → none |
| A59600 | Earthworks - Fill & Compaction | 2026-03-25 → 2026-08-15 A (+143d) | 2026-04-18 → 2026-09-20 A (+155d) | 0% → 100% | 60d → none |
| A59610 | Subgrade | 2026-04-19 → 2026-08-15 A (+118d) | 2026-04-29 → 2026-09-20 A (+144d) | 0% → 100% | 60d → none |
| R14 | **Road14** | 2026-03-25 → 2026-03-15 (-10d) | 2026-05-16 → 2026-09-20 (+127d) |  |  |
| EW | **Earth Work** | 2026-03-25 → 2026-03-15 (-10d) | 2026-05-16 → 2026-09-20 (+127d) |  |  |
| A59620 | Earthworks - Cut Excavation | 2026-03-25 → 2026-03-15 A (-10d) | 2026-04-09 → 2026-09-20 A (+164d) | 0% → 100% | 30d → none |
| A59630 | Earthworks - Fill & Compaction | 2026-04-11 → 2026-08-15 A (+126d) | 2026-05-04 → 2026-09-20 A (+139d) | 0% → 100% | 52d → none |
| A59640 | Subgrade | 2026-05-05 → 2026-08-15 A (+102d) | 2026-05-16 → 2026-09-20 A (+127d) | 0% → 100% | 52d → none |
| R15 | **Road15** | 2026-04-11 → 2026-03-15 (-27d) | 2026-06-01 → 2026-10-26 (+147d) |  |  |
| EW | **Earth Work** | 2026-04-11 → 2026-03-15 (-27d) | 2026-06-01 → 2026-10-26 (+147d) |  |  |
| A59650 | Earthworks - Cut Excavation | 2026-04-11 → 2026-03-15 A (-27d) | 2026-04-26 → 2026-09-20 A (+147d) | 0% → 100% | 30d → none |
| A59670 | Subgrade | 2026-05-21 → 2026-08-15 A (+86d) | 2026-06-01 → 2026-09-20 A (+111d) | 0% → 100% | 44d → none |
| A59660 | Earthworks - Fill & Compaction | 2026-04-27 → 2026-10-03 (+159d) | 2026-05-20 → 2026-10-26 (+159d) |  | 44d → -39.7d |
| R16 | **Road16** | 2026-04-27 → 2026-03-15 (-43d) | 2026-06-13 → 2026-10-10 (+119d) |  |  |
| DE | **Demolition** | 2026-04-27 → 2026-08-15 (+110d) | 2026-05-16 → 2026-09-20 (+127d) |  |  |
| A59710 | Demolition of existing Asphalt | 2026-04-27 → 2026-08-15 A (+110d) | 2026-05-03 → 2026-09-20 A (+140d) | 0% → 100% | 30d → none |
| A59720 | Compaction of existing aggregate base course layer | 2026-05-04 → 2026-08-15 A (+103d) | 2026-05-10 → 2026-09-20 A (+133d) | 0% → 100% | 40d → none |
| A59730 | Demolition of existing Kerbs | 2026-05-11 → 2026-08-15 A (+96d) | 2026-05-16 → 2026-09-20 A (+127d) | 0% → 100% | 40d → none |
| EW | **Earth Work** | 2026-05-17 → 2026-03-15 (-63d) | 2026-06-13 → 2026-10-10 (+119d) |  |  |
| A59680 | Earthworks - Cut Excavation | 2026-05-17 → 2026-03-15 A (-63d) | 2026-06-01 → 2026-09-20 A (+111d) | 0% → 100% | 40d → none |
| A59690 | Earthworks - Fill & Compaction | 2026-06-02 → 2026-08-29 A (+88d) | 2026-06-07 → 2026-10-05 (+120d) | 0% → 43% | 40d → -25.05d |
| A59700 | Subgrade | 2026-06-08 → 2026-08-29 A (+82d) | 2026-06-13 → 2026-10-10 (+119d) | 0% → 30% | 40d → -25.05d |
| R17 | **Road17** | 2026-05-04 → 2026-03-15 (-50d) | 2026-06-18 → 2026-10-17 (+121d) |  |  |
| DE | **Demolition** | 2026-05-04 → 2026-08-15 (+103d) | 2026-05-20 → 2026-09-20 (+123d) |  |  |
| A59770 | Demolition of existing Asphalt | 2026-05-04 → 2026-08-15 A (+103d) | 2026-05-09 → 2026-09-20 A (+134d) | 0% → 100% | 30d → none |
| A59780 | Compaction of existing aggregate base course layer | 2026-05-10 → 2026-08-15 A (+97d) | 2026-05-14 → 2026-09-20 A (+129d) | 0% → 100% | 41d → none |
| A59790 | Demolition of existing Kerbs | 2026-05-16 → 2026-08-15 A (+91d) | 2026-05-20 → 2026-09-20 A (+123d) | 0% → 100% | 41d → none |
| EW | **Earth Work** | 2026-05-21 → 2026-03-15 (-67d) | 2026-06-18 → 2026-10-17 (+121d) |  |  |
| A59740 | Earthworks - Cut Excavation | 2026-05-21 → 2026-03-15 A (-67d) | 2026-05-26 → 2026-09-20 A (+117d) | 0% → 100% | 41d → none |
| A59750 | Earthworks - Fill & Compaction | 2026-05-27 → 2026-08-29 A (+94d) | 2026-06-07 → 2026-10-08 (+123d) | 0% → 48% | 41d → -26.4d |
| A59760 | Subgrade | 2026-06-08 → 2026-08-29 A (+82d) | 2026-06-18 → 2026-10-17 (+121d) | 0% → 30% | 41d → -26.4d |
| CO1 | **Collector 1** | 2026-05-10 → 2026-03-15 (-56d) | 2026-07-08 → 2026-09-20 (+74d) |  |  |
| DE | **Demolition** | 2026-05-10 → 2026-08-15 (+97d) | 2026-05-27 → 2026-09-20 (+116d) |  |  |
| A59830 | Demolition of existing Asphalt | 2026-05-10 → 2026-08-15 A (+97d) | 2026-05-16 → 2026-09-20 A (+127d) | 0% → 100% | 30d → none |
| A59840 | Compaction of existing aggregate base course layer | 2026-05-17 → 2026-08-15 A (+90d) | 2026-05-21 → 2026-09-20 A (+122d) | 0% → 100% | 30d → none |
| A59850 | Demolition of existing Kerbs | 2026-05-23 → 2026-08-15 A (+84d) | 2026-05-27 → 2026-09-20 A (+116d) | 0% → 100% | 30d → none |
| EW | **Earth Work** | 2026-05-28 → 2026-03-15 (-74d) | 2026-07-08 → 2026-09-20 (+74d) |  |  |
| A59800 | Earthworks - Cut Excavation | 2026-05-28 → 2026-03-15 A (-74d) | 2026-06-02 → 2026-09-20 A (+110d) | 0% → 100% | 30d → none |
| A59810 | Earthworks - Fill & Compaction | 2026-06-03 → 2026-08-15 A (+73d) | 2026-06-27 → 2026-09-20 A (+85d) | 0% → 100% | 30d → none |
| A59820 | Subgrade | 2026-06-28 → 2026-08-15 A (+48d) | 2026-07-08 → 2026-09-20 A (+74d) | 0% → 100% | 30d → none |

| ID | Task | Start | Finish | Complete | Total float | Predecessors |
| --- | --- | --- | --- | --- | --- | --- |
| 1 | **STORM NETWORK** | 2026-02-12 → 2026-08-20 (+189d) | 2027-01-16 → 2027-03-08 (+51d) |  |  |  |
| LR 01 | **LR 01** | 2026-03-19 → 2026-08-20 (+154d) | 2026-11-30 → 2026-11-23 (-7d) |  |  |  |
| MH-32-A-15 /MH-32-A-14 | **MH-32-A-15 /MH-32-A-14** | 2026-08-06 → 2026-08-20 (+14d) | 2026-09-21 → 2026-11-10 (+50d) |  |  |  |
| A74430 | Excavation | 2026-08-06 → 2026-08-20 A (+14d) | 2026-08-17 → 2026-09-28 A (+42d) | 0% → 100% | 44d → none |  |
| A74440 | Pipe Laying | 2026-08-18 → 2026-08-20 A (+2d) | 2026-08-29 → 2026-09-28 A (+30d) | 0% → 100% | 44d → none | A74430, A11160 → A74430 |
| A74450 | Install Manhole | 2026-08-18 → 2026-08-20 A (+2d) | 2026-08-29 → 2026-09-28 A (+30d) | 0% → 100% | 54d → none | A74430, A10240 → A74430 |
| A74470 | Backfilling & Compaction | 2026-09-10 → 2026-08-20 A (-21d) | 2026-09-21 → 2026-09-28 A (+7d) | 0% → 100% | 44d → none |  |
| A74460 | Testing & Inspection | 2026-08-30 → 2026-10-31 (+62d) | 2026-09-09 → 2026-11-10 (+62d) |  | 44d → 58d |  |
| MH-32-A-16 /MH-32-A-15 | **MH-32-A-16 /MH-32-A-15** | 2026-08-18 → 2026-08-20 (+2d) | 2026-10-03 → 2026-11-10 (+38d) |  |  |  |
| A74380 | Excavation | 2026-08-18 → 2026-08-20 A (+2d) | 2026-08-29 → 2026-09-28 A (+30d) | 0% → 100% | 44d → none |  |
| A74390 | Pipe Laying | 2026-08-30 → 2026-08-20 A (-10d) | 2026-09-09 → 2026-09-28 A (+19d) | 0% → 100% | 44d → none | A74380, A11160 → A74380 |
| A74400 | Install Manhole | 2026-08-30 → 2026-08-20 A (-10d) | 2026-09-09 → 2026-09-28 A (+19d) | 0% → 100% | 54d → none | A74380, A10240 → A74380 |
| A74420 | Backfilling & Compaction | 2026-09-22 → 2026-08-20 A (-33d) | 2026-10-03 → 2026-09-28 A (-5d) | 0% → 100% | 44d → none |  |
| A74410 | Testing & Inspection | 2026-09-10 → 2026-10-31 (+51d) | 2026-09-21 → 2026-11-10 (+50d) |  | 44d → 58d |  |
| MH-32-A-17 /MH-32-A-16 | **MH-32-A-17 /MH-32-A-16** | 2026-08-30 → 2026-08-20 (-10d) | 2026-10-14 → 2026-11-10 (+27d) |  |  |  |
| A74330 | Excavation | 2026-08-30 → 2026-08-20 A (-10d) | 2026-09-09 → 2026-09-28 A (+19d) | 0% → 100% | 44d → none |  |
| A74340 | Pipe Laying | 2026-09-10 → 2026-08-20 A (-21d) | 2026-09-21 → 2026-09-28 A (+7d) | 0% → 100% | 44d → none | A74330, A11160 → A74330 |
| A74350 | Install Manhole | 2026-09-10 → 2026-08-20 A (-21d) | 2026-09-21 → 2026-09-28 A (+7d) | 0% → 100% | 54d → none | A74330, A10240 → A74330 |
| A74370 | Backfilling & Compaction | 2026-10-04 → 2026-08-20 A (-45d) | 2026-10-14 → 2026-09-28 A (-16d) | 0% → 100% | 44d → none |  |
| A74360 | Testing & Inspection | 2026-09-22 → 2026-10-31 (+39d) | 2026-10-03 → 2026-11-10 (+38d) |  | 44d → 58d |  |
| MH-32-A-18 /MH-32-A-17 | **MH-32-A-18 /MH-32-A-17** | 2026-09-10 → 2026-08-20 (-21d) | 2026-10-26 → 2026-11-10 (+15d) |  |  |  |
| A74280 | Excavation | 2026-09-10 → 2026-08-20 A (-21d) | 2026-09-21 → 2026-09-28 A (+7d) | 0% → 100% | 44d → none |  |
| A74290 | Pipe Laying | 2026-09-22 → 2026-08-20 A (-33d) | 2026-10-03 → 2026-09-28 A (-5d) | 0% → 100% | 44d → none | A74280, A11160 → A74280 |
| A74300 | Install Manhole | 2026-09-22 → 2026-08-20 A (-33d) | 2026-10-03 → 2026-09-28 A (-5d) | 0% → 100% | 54d → none | A74280, A10240 → A74280 |
| A74320 | Backfilling & Compaction | 2026-10-15 → 2026-08-20 A (-56d) | 2026-10-26 → 2026-09-28 A (-28d) | 0% → 100% | 44d → none |  |
| A74310 | Testing & Inspection | 2026-10-04 → 2026-10-31 (+27d) | 2026-10-14 → 2026-11-10 (+27d) |  | 44d → 58d |  |
| MH-32-A-19 /MH-32-A-18 | **MH-32-A-19 /MH-32-A-18** | 2026-09-22 → 2026-08-20 (-33d) | 2026-11-07 → 2026-11-10 (+3d) |  |  |  |
| A74230 | Excavation | 2026-09-22 → 2026-08-20 A (-33d) | 2026-10-03 → 2026-09-28 A (-5d) | 0% → 100% | 44d → none |  |
| A74240 | Pipe Laying | 2026-10-04 → 2026-08-20 A (-45d) | 2026-10-14 → 2026-09-28 A (-16d) | 0% → 100% | 44d → none | A74230, A11160 → A74230 |
| A74250 | Install Manhole | 2026-10-04 → 2026-08-20 A (-45d) | 2026-10-14 → 2026-09-28 A (-16d) | 0% → 100% | 54d → none | A74230, A10240 → A74230 |
| A74270 | Backfilling & Compaction | 2026-10-27 → 2026-08-20 A (-68d) | 2026-11-07 → 2026-09-28 A (-40d) | 0% → 100% | 44d → none |  |
| A74260 | Testing & Inspection | 2026-10-15 → 2026-10-31 (+16d) | 2026-10-26 → 2026-11-10 (+15d) |  | 44d → 58d |  |
| MH-32-A-20 /MH-32-A-19 | **MH-32-A-20 /MH-32-A-19** | 2026-10-04 → 2026-08-20 (-45d) | 2026-11-18 → 2026-11-23 (+5d) |  |  |  |
| A74180 | Excavation | 2026-10-04 → 2026-08-20 A (-45d) | 2026-10-14 → 2026-09-28 A (-16d) | 0% → 100% | 44d → none |  |
| A74190 | Pipe Laying | 2026-10-15 → 2026-09-05 A (-40d) | 2026-10-26 → 2026-10-31 (+5d) | 0% → 90% | 44d → 57d | A74180, A11160 → A74180 |
| A74200 | Install Manhole | 2026-10-15 → 2026-09-05 A (-40d) | 2026-10-26 → 2026-10-31 (+5d) | 0% → 90% | 54d → 67d | A74180, A10240 → A74180 |
| A74210 | Testing & Inspection | 2026-10-27 → 2026-11-01 (+5d) | 2026-11-07 → 2026-11-11 (+4d) |  | 44d → 57d |  |
| A74220 | Backfilling & Compaction | 2026-11-08 → 2026-11-12 (+4d) | 2026-11-18 → 2026-11-23 (+5d) |  | 44d → 57d |  |
| MH-32-A-21 /MH-32-A-20 | **MH-32-A-21 /MH-32-A-20** | 2026-10-15 → 2026-08-20 (-56d) | 2026-11-30 → 2026-09-28 (-63d) |  |  |  |
| A74130 | Excavation | 2026-10-15 → 2026-08-20 A (-56d) | 2026-10-26 → 2026-09-28 A (-28d) | 0% → 100% | 44d → none |  |
| A74140 | Pipe Laying | 2026-10-27 → 2026-08-20 A (-68d) | 2026-11-07 → 2026-09-28 A (-40d) | 0% → 100% | 44d → none | A74130, A11160 → A74130 |
| A74150 | Install Manhole | 2026-10-27 → 2026-08-20 A (-68d) | 2026-11-07 → 2026-09-28 A (-40d) | 0% → 100% | 54d → none | A74130, A10240 → A74130 |
| A74160 | Testing & Inspection | 2026-11-08 → 2026-08-20 A (-80d) | 2026-11-18 → 2026-09-28 A (-51d) | 0% → 100% | 44d → none |  |
| A74170 | Backfilling & Compaction | 2026-11-19 → 2026-08-20 A (-91d) | 2026-11-30 → 2026-09-28 A (-63d) | 0% → 100% | 44d → none |  |
| MH-36-A-1 /MH-36 | **MH-36-A-1 /MH-36** | 2026-03-19 → 2026-08-20 (+154d) | 2026-05-18 → 2026-11-10 (+176d) |  |  |  |
| A74580 | Excavation | 2026-03-19 → 2026-08-20 A (+154d) | 2026-03-30 → 2026-09-28 A (+182d) | 0% → 100% | 44d → none | A56600, A1070, A1080, A1090, A1100, A1110, A1080 FF, A10940, A11120, A11130, A11160 → A56600, A1070, A1080, A1090, A1100, A1110, A1080 FF, A10240 SS+15d, A10940, A11120, A11130, A11140, A11150, A11160, A10240 FF+15d |
| A74590 | Pipe Laying | 2026-03-31 → 2026-08-20 A (+142d) | 2026-04-11 → 2026-09-28 A (+170d) | 0% → 100% | 118d → none | A74580, A11160 → A74580 |
| A74600 | Install Manhole | 2026-04-26 → 2026-08-20 A (+116d) | 2026-05-06 → 2026-09-28 A (+145d) | 0% → 100% | 106d → none | A74580, A10240 → A74580 |
| A74620 | Backfilling & Compaction | 2026-05-07 → 2026-08-20 A (+105d) | 2026-05-18 → 2026-09-28 A (+133d) | 0% → 100% | 106d → none |  |
| A74610 | Testing & Inspection | 2026-04-12 → 2026-10-31 (+202d) | 2026-04-22 → 2026-11-10 (+202d) |  | 118d → 22.5d |  |
| MH-36-A-10 /MH-36-A-9 | **MH-36-A-10 /MH-36-A-9** | 2026-07-02 → 2026-08-20 (+49d) | 2026-08-19 → 2026-11-10 (+83d) |  |  |  |
| A75030 | Excavation | 2026-07-02 → 2026-08-20 A (+49d) | 2026-07-13 → 2026-09-28 A (+77d) | 0% → 100% | 44d → none |  |
| A75040 | Pipe Laying | 2026-07-14 → 2026-08-20 A (+37d) | 2026-07-25 → 2026-09-28 A (+65d) | 0% → 100% | 50d → none | A75030, A11160 → A75030 |
| A75050 | Install Manhole | 2026-07-14 → 2026-08-20 A (+37d) | 2026-07-25 → 2026-09-28 A (+65d) | 0% → 100% | 60d → none | A75030, A10240 → A75030 |
| A75070 | Backfilling & Compaction | 2026-08-09 → 2026-08-20 A (+11d) | 2026-08-19 → 2026-09-28 A (+40d) | 0% → 100% | 48d → none |  |
| A75060 | Testing & Inspection | 2026-07-26 → 2026-10-31 (+97d) | 2026-08-05 → 2026-11-10 (+97d) |  | 50d → 58d |  |
| MH-36-A-11 /MH-36-A-10 | **MH-36-A-11 /MH-36-A-10** | 2026-07-14 → 2026-08-20 (+37d) | 2026-08-24 → 2026-11-10 (+78d) |  |  |  |
| A74530 | Excavation | 2026-07-14 → 2026-08-20 A (+37d) | 2026-07-25 → 2026-09-28 A (+65d) | 0% → 100% | 44d → none |  |
| A74540 | Pipe Laying | 2026-07-26 → 2026-08-20 A (+25d) | 2026-08-05 → 2026-09-28 A (+54d) | 0% → 100% | 50d → none | A74530, A11160 → A74530 |
| A74550 | Install Manhole | 2026-07-26 → 2026-08-20 A (+25d) | 2026-08-05 → 2026-09-28 A (+54d) | 0% → 100% | 60d → none | A74530, A10240 → A74530 |
| A74570 | Backfilling & Compaction | 2026-08-20 A | 2026-08-24 → 2026-09-28 A (+35d) | 0% → 100% | 48d → none |  |
| A74560 | Testing & Inspection | 2026-08-06 → 2026-10-31 (+86d) | 2026-08-17 → 2026-11-10 (+85d) |  | 50d → 58d |  |
| MH-36-A-12 /MH-36-A-11 | **MH-36-A-12 /MH-36-A-11** | 2026-07-26 → 2026-08-20 (+25d) | 2026-09-09 → 2026-11-10 (+62d) |  |  |  |
| A74480 | Excavation | 2026-07-26 → 2026-08-20 A (+25d) | 2026-08-05 → 2026-09-28 A (+54d) | 0% → 100% | 44d → none |  |
| A74490 | Pipe Laying | 2026-08-06 → 2026-08-20 A (+14d) | 2026-08-17 → 2026-09-28 A (+42d) | 0% → 100% | 44d → none | A74480, A11160 → A74480 |
| A74500 | Install Manhole | 2026-08-06 → 2026-08-20 A (+14d) | 2026-08-17 → 2026-09-28 A (+42d) | 0% → 100% | 54d → none | A74480, A10240 → A74480 |
| A74520 | Backfilling & Compaction | 2026-08-30 → 2026-08-20 A (-10d) | 2026-09-09 → 2026-09-28 A (+19d) | 0% → 100% | 44d → none |  |
| A74510 | Testing & Inspection | 2026-08-18 → 2026-10-31 (+74d) | 2026-08-29 → 2026-11-10 (+73d) |  | 44d → 58d |  |
| MH-36-A-2 /MH-36-A-1 | **MH-36-A-2 /MH-36-A-1** | 2026-03-31 → 2026-08-20 (+142d) | 2026-05-18 → 2026-11-10 (+176d) |  |  |  |
| A74630 | Excavation | 2026-03-31 → 2026-08-20 A (+142d) | 2026-04-11 → 2026-09-28 A (+170d) | 0% → 100% | 44d → none |  |

| ID | Task | Start | Finish | Complete | Total float | Predecessors |
| --- | --- | --- | --- | --- | --- | --- |
| A74640 | Pipe Laying | 2026-04-12 → 2026-08-20 A (+130d) | 2026-04-22 → 2026-09-28 A (+159d) | 0% → 100% | 50d → none | A74630, A11160 → A74630 |
| A74650 | Install Manhole | 2026-04-26 → 2026-08-20 A (+116d) | 2026-05-06 → 2026-09-28 A (+145d) | 0% → 100% | 48d → none | A74630, A10240 → A74630 |
| A74670 | Backfilling & Compaction | 2026-05-07 → 2026-08-20 A (+105d) | 2026-05-18 → 2026-09-28 A (+133d) | 0% → 100% | 48d → none |  |
| A74660 | Testing & Inspection | 2026-04-23 → 2026-10-31 (+191d) | 2026-05-04 → 2026-11-10 (+190d) |  | 50d → 58d |  |
| MH-36-A-3 /MH-36-A-2 | **MH-36-A-3 /MH-36-A-2** | 2026-04-12 → 2026-08-20 (+130d) | 2026-05-30 → 2026-11-10 (+164d) |  |  |  |
| A74680 | Excavation | 2026-04-12 → 2026-08-20 A (+130d) | 2026-04-22 → 2026-09-28 A (+159d) | 0% → 100% | 44d → none |  |
| A74690 | Pipe Laying | 2026-04-23 → 2026-08-20 A (+119d) | 2026-05-04 → 2026-09-28 A (+147d) | 0% → 100% | 50d → none | A74680, A11160 → A74680 |
| A74700 | Install Manhole | 2026-04-26 → 2026-08-20 A (+116d) | 2026-05-06 → 2026-09-28 A (+145d) | 0% → 100% | 58d → none | A74680, A10240 → A74680 |
| A74720 | Backfilling & Compaction | 2026-05-19 → 2026-08-20 A (+93d) | 2026-05-30 → 2026-09-28 A (+121d) | 0% → 100% | 48d → none |  |
| A74710 | Testing & Inspection | 2026-05-05 → 2026-10-31 (+179d) | 2026-05-16 → 2026-11-10 (+178d) |  | 50d → 58d |  |
| MH-36-A-4 /MH-36-A-3 | **MH-36-A-4 /MH-36-A-3** | 2026-04-23 → 2026-08-20 (+119d) | 2026-06-10 → 2026-11-10 (+153d) |  |  |  |
| A74730 | Excavation | 2026-04-23 → 2026-08-20 A (+119d) | 2026-05-04 → 2026-09-28 A (+147d) | 0% → 100% | 44d → none |  |
| A74740 | Pipe Laying | 2026-05-05 → 2026-08-20 A (+107d) | 2026-05-16 → 2026-09-28 A (+135d) | 0% → 100% | 50d → none | A74730, A11160 → A74730 |
| A74750 | Install Manhole | 2026-05-05 → 2026-08-20 A (+107d) | 2026-05-16 → 2026-09-28 A (+135d) | 0% → 100% | 60d → none | A74730, A10240 → A74730 |
| A74770 | Backfilling & Compaction | 2026-05-31 → 2026-08-20 A (+81d) | 2026-06-10 → 2026-09-28 A (+110d) | 0% → 100% | 48d → none |  |
| A74760 | Testing & Inspection | 2026-05-17 → 2026-10-31 (+167d) | 2026-05-27 → 2026-11-10 (+167d) |  | 50d → 58d |  |
| MH-36-A-5 /MH-36-A-4 | **MH-36-A-5 /MH-36-A-4** | 2026-05-05 → 2026-08-20 (+107d) | 2026-06-22 → 2026-11-10 (+141d) |  |  |  |
| A74780 | Excavation | 2026-05-05 → 2026-08-20 A (+107d) | 2026-05-16 → 2026-09-28 A (+135d) | 0% → 100% | 44d → none |  |
| A74790 | Pipe Laying | 2026-05-17 → 2026-08-20 A (+95d) | 2026-05-27 → 2026-09-28 A (+124d) | 0% → 100% | 50d → none | A74780, A11160 → A74780 |
| A74800 | Install Manhole | 2026-05-17 → 2026-08-20 A (+95d) | 2026-05-27 → 2026-09-28 A (+124d) | 0% → 100% | 60d → none | A74780, A10240 → A74780 |
| A74820 | Backfilling & Compaction | 2026-06-11 → 2026-08-20 A (+70d) | 2026-06-22 → 2026-09-28 A (+98d) | 0% → 100% | 48d → none |  |
| A74810 | Testing & Inspection | 2026-05-28 → 2026-10-31 (+156d) | 2026-06-08 → 2026-11-10 (+155d) |  | 50d → 58d |  |
| MH-36-A-6 /MH-36-A-5 | **MH-36-A-6 /MH-36-A-5** | 2026-05-17 → 2026-08-20 (+95d) | 2026-07-04 → 2026-11-10 (+129d) |  |  |  |
| A74830 | Excavation | 2026-05-17 → 2026-08-20 A (+95d) | 2026-05-27 → 2026-09-28 A (+124d) | 0% → 100% | 44d → none |  |
| A74840 | Pipe Laying | 2026-05-28 → 2026-08-20 A (+84d) | 2026-06-08 → 2026-09-28 A (+112d) | 0% → 100% | 50d → none | A74830, A11160 → A74830 |
| A74850 | Install Manhole | 2026-05-28 → 2026-08-20 A (+84d) | 2026-06-08 → 2026-09-28 A (+112d) | 0% → 100% | 60d → none | A74830, A10240 → A74830 |
| A74870 | Backfilling & Compaction | 2026-06-23 → 2026-08-20 A (+58d) | 2026-07-04 → 2026-09-28 A (+86d) | 0% → 100% | 48d → none |  |
| A74860 | Testing & Inspection | 2026-06-09 → 2026-10-31 (+144d) | 2026-06-20 → 2026-11-10 (+143d) |  | 50d → 58d |  |
| MH-36-A-7 /MH-36-A-6 | **MH-36-A-7 /MH-36-A-6** | 2026-05-28 → 2026-08-20 (+84d) | 2026-07-15 → 2026-11-10 (+118d) |  |  |  |
| A74880 | Excavation | 2026-05-28 → 2026-08-20 A (+84d) | 2026-06-08 → 2026-09-28 A (+112d) | 0% → 100% | 44d → none |  |
| A74890 | Pipe Laying | 2026-06-09 → 2026-08-20 A (+72d) | 2026-06-20 → 2026-09-28 A (+100d) | 0% → 100% | 50d → none | A74880, A11160 → A74880 |
| A74900 | Install Manhole | 2026-06-09 → 2026-08-20 A (+72d) | 2026-06-20 → 2026-09-28 A (+100d) | 0% → 100% | 60d → none | A74880, A10240 → A74880 |
| A74920 | Backfilling & Compaction | 2026-07-05 → 2026-08-20 A (+46d) | 2026-07-15 → 2026-09-28 A (+75d) | 0% → 100% | 48d → none |  |
| A74910 | Testing & Inspection | 2026-06-21 → 2026-10-31 (+132d) | 2026-07-01 → 2026-11-10 (+132d) |  | 50d → 58d |  |
| MH-36-A-8 /MH-36-A-7 | **MH-36-A-8 /MH-36-A-7** | 2026-06-09 → 2026-08-20 (+72d) | 2026-07-27 → 2026-11-10 (+106d) |  |  |  |
| A74930 | Excavation | 2026-06-09 → 2026-08-20 A (+72d) | 2026-06-20 → 2026-09-28 A (+100d) | 0% → 100% | 44d → none |  |
| A74940 | Pipe Laying | 2026-06-21 → 2026-08-20 A (+60d) | 2026-07-01 → 2026-09-28 A (+89d) | 0% → 100% | 50d → none | A74930, A11160 → A74930 |
| A74950 | Install Manhole | 2026-06-21 → 2026-08-20 A (+60d) | 2026-07-01 → 2026-09-28 A (+89d) | 0% → 100% | 60d → none | A74930, A10240 → A74930 |
| A74970 | Backfilling & Compaction | 2026-07-16 → 2026-08-20 A (+35d) | 2026-07-27 → 2026-09-28 A (+63d) | 0% → 100% | 48d → none |  |
| A74960 | Testing & Inspection | 2026-07-02 → 2026-10-31 (+121d) | 2026-07-13 → 2026-11-10 (+120d) |  | 50d → 58d |  |
| MH-36-A-9 /MH-36-A-8 | **MH-36-A-9 /MH-36-A-8** | 2026-06-21 → 2026-08-20 (+60d) | 2026-08-08 → 2026-11-10 (+94d) |  |  |  |
| A74980 | Excavation | 2026-06-21 → 2026-08-20 A (+60d) | 2026-07-01 → 2026-09-28 A (+89d) | 0% → 100% | 44d → none |  |
| A74990 | Pipe Laying | 2026-07-02 → 2026-08-20 A (+49d) | 2026-07-13 → 2026-09-28 A (+77d) | 0% → 100% | 50d → none | A74980, A11160 → A74980 |
| A75000 | Install Manhole | 2026-07-02 → 2026-08-20 A (+49d) | 2026-07-13 → 2026-09-28 A (+77d) | 0% → 100% | 60d → none | A74980, A10240 → A74980 |
| A75020 | Backfilling & Compaction | 2026-07-28 → 2026-08-20 A (+23d) | 2026-08-08 → 2026-09-28 A (+51d) | 0% → 100% | 48d → none |  |
| A75010 | Testing & Inspection | 2026-07-14 → 2026-10-31 (+109d) | 2026-07-25 → 2026-11-10 (+108d) |  | 50d → 58d |  |
| LR 02 | **LR 02** | 2026-03-10 → 2026-08-20 (+163d) | 2027-01-04 → 2027-01-25 (+21d) |  |  |  |
| MH-32-01 /MH-32A | **MH-32-01 /MH-32A** | 2026-03-10 → 2026-08-20 (+163d) | 2026-05-04 → 2026-10-14 (+163d) |  |  |  |
| A74080 | Excavation | 2026-03-10 → 2026-08-20 A (+163d) | 2026-03-21 → 2026-09-28 A (+191d) | 0% → 100% | 55d → none |  |
| A74090 | Pipe Laying | 2026-03-22 → 2026-08-20 A (+151d) | 2026-03-25 → 2026-09-28 A (+187d) | 0% → 100% | 55d → none | A74080, A11160 → A74080 |
| A74100 | Install Manhole | 2026-04-26 → 2026-08-20 A (+116d) | 2026-04-29 → 2026-09-28 A (+152d) | 0% → 100% | 35d → none | A74080, A10240 → A74080 |
| A74120 | Backfilling & Compaction | 2026-04-30 → 2026-08-20 A (+112d) | 2026-05-04 → 2026-09-28 A (+147d) | 0% → 100% | 35d → none |  |
| A74110 | Testing & Inspection | 2026-03-26 → 2026-10-03 (+191d) | 2026-04-06 → 2026-10-14 (+191d) |  | 55d → 45.16d |  |
| MH-32-A-04 /MH-32A-03 | **MH-32-A-04 /MH-32A-03** | 2026-10-04 → 2026-08-20 (-45d) | 2026-10-21 → 2027-01-06 (+77d) |  |  |  |
| A73930 | Excavation | 2026-10-04 → 2026-08-20 A (-45d) | 2026-10-07 → 2026-09-28 A (-9d) | 0% → 100% | 26d → none |  |
| A73940 | Pipe Laying | 2026-10-08 → 2026-08-20 A (-49d) | 2026-10-12 → 2026-09-28 A (-14d) | 0% → 100% | 26d → none | A73930, A11160 → A73930 |
| A73950 | Install Manhole | 2026-10-08 → 2026-08-20 A (-49d) | 2026-10-12 → 2026-09-28 A (-14d) | 0% → 100% | 30d → none | A73930, A10240 → A73930 |
| A73970 | Backfilling & Compaction | 2026-10-18 → 2026-08-20 A (-59d) | 2026-10-21 → 2026-09-28 A (-23d) | 0% → 100% | 26d → none |  |
| A73960 | Testing & Inspection | 2026-10-13 → 2027-01-02 (+81d) | 2026-10-17 → 2027-01-06 (+81d) |  | 26d → 16.98d |  |
| MH-32-A-05 /MH-32A-04 | **MH-32-A-05 /MH-32A-04** | 2026-10-08 → 2026-08-20 (-49d) | 2026-10-26 → 2027-01-06 (+72d) |  |  |  |
| A73880 | Excavation | 2026-10-08 → 2026-08-20 A (-49d) | 2026-10-12 → 2026-09-28 A (-14d) | 0% → 100% | 26d → none |  |
| A73890 | Pipe Laying | 2026-10-13 → 2026-08-20 A (-54d) | 2026-10-17 → 2026-09-28 A (-19d) | 0% → 100% | 26d → none | A73880, A11160 → A73880 |
| A73900 | Install Manhole | 2026-10-13 → 2026-08-20 A (-54d) | 2026-10-17 → 2026-09-28 A (-19d) | 0% → 100% | 30d → none | A73880, A10240 → A73880 |
| A73920 | Backfilling & Compaction | 2026-10-22 → 2026-08-20 A (-63d) | 2026-10-26 → 2026-09-28 A (-28d) | 0% → 100% | 26d → none |  |
| A73910 | Testing & Inspection | 2026-10-18 → 2027-01-02 (+76d) | 2026-10-21 → 2027-01-06 (+77d) |  | 26d → 16.98d |  |
| MH-32-A-06 /MH-32A-05 | **MH-32-A-06 /MH-32A-05** | 2026-10-13 → 2026-08-20 (-54d) | 2026-10-31 → 2027-01-06 (+67d) |  |  |  |
| A73830 | Excavation | 2026-10-13 → 2026-08-20 A (-54d) | 2026-10-17 → 2026-09-28 A (-19d) | 0% → 100% | 26d → none |  |
| A73840 | Pipe Laying | 2026-10-18 → 2026-08-20 A (-59d) | 2026-10-21 → 2026-09-28 A (-23d) | 0% → 100% | 26d → none | A73830, A11160 → A73830 |
| A73850 | Install Manhole | 2026-10-18 → 2026-08-20 A (-59d) | 2026-10-21 → 2026-09-28 A (-23d) | 0% → 100% | 30d → none | A73830, A10240 → A73830 |
| A73870 | Backfilling & Compaction | 2026-10-27 → 2026-08-20 A (-68d) | 2026-10-31 → 2026-09-28 A (-33d) | 0% → 100% | 26d → none |  |

| ID | Task | Start | Finish | Complete | Total float | Predecessors |
| --- | --- | --- | --- | --- | --- | --- |
| A73860 | Testing & Inspection | 2026-10-22 → 2027-01-02 (+72d) | 2026-10-26 → 2027-01-06 (+72d) |  | 26d → 16.98d |  |
| MH-32-A-07 /MH-32A-06 | **MH-32-A-07 /MH-32A-06** | 2026-10-18 → 2026-08-20 (-59d) | 2026-11-04 → 2027-01-06 (+63d) |  |  |  |
| A73780 | Excavation | 2026-10-18 → 2026-08-20 A (-59d) | 2026-10-21 → 2026-09-28 A (-23d) | 0% → 100% | 26d → none |  |
| A73790 | Pipe Laying | 2026-10-22 → 2026-08-20 A (-63d) | 2026-10-26 → 2026-09-28 A (-28d) | 0% → 100% | 26d → none | A73780, A11160 → A73780 |
| A73800 | Install Manhole | 2026-10-22 → 2026-08-20 A (-63d) | 2026-10-26 → 2026-09-28 A (-28d) | 0% → 100% | 30d → none | A73780, A10240 → A73780 |
| A73820 | Backfilling & Compaction | 2026-11-01 → 2026-08-20 A (-73d) | 2026-11-04 → 2026-09-28 A (-37d) | 0% → 100% | 26d → none |  |
| A73810 | Testing & Inspection | 2026-10-27 → 2027-01-02 (+67d) | 2026-10-31 → 2027-01-06 (+67d) |  | 26d → 16.98d |  |
| MH-32-A-08 /MH-32A-07 | **MH-32-A-08 /MH-32A-07** | 2026-10-22 → 2026-08-20 (-63d) | 2026-11-09 → 2027-01-06 (+58d) |  |  |  |
| A73730 | Excavation | 2026-10-22 → 2026-08-20 A (-63d) | 2026-10-26 → 2026-09-28 A (-28d) | 0% → 100% | 26d → none |  |
| A73740 | Pipe Laying | 2026-10-27 → 2026-08-20 A (-68d) | 2026-10-31 → 2026-09-28 A (-33d) | 0% → 100% | 26d → none | A73730, A11160 → A73730 |
| A73750 | Install Manhole | 2026-10-27 → 2026-08-20 A (-68d) | 2026-10-31 → 2026-09-28 A (-33d) | 0% → 100% | 30d → none | A73730, A10240 → A73730 |
| A73770 | Backfilling & Compaction | 2026-11-05 → 2026-08-20 A (-77d) | 2026-11-09 → 2026-09-28 A (-42d) | 0% → 100% | 26d → none |  |
| A73760 | Testing & Inspection | 2026-11-01 → 2027-01-02 (+62d) | 2026-11-04 → 2027-01-06 (+63d) |  | 26d → 16.98d |  |
| MH-32-A-09 /MH-32A-08 | **MH-32-A-09 /MH-32A-08** | 2026-10-27 → 2026-08-20 (-68d) | 2026-11-14 → 2027-01-06 (+53d) |  |  |  |
| A73680 | Excavation | 2026-10-27 → 2026-08-20 A (-68d) | 2026-10-31 → 2026-09-28 A (-33d) | 0% → 100% | 26d → none |  |
| A73690 | Pipe Laying | 2026-11-01 → 2026-08-20 A (-73d) | 2026-11-04 → 2026-09-28 A (-37d) | 0% → 100% | 26d → none | A73680, A11160 → A73680 |
| A73700 | Install Manhole | 2026-11-01 → 2026-08-20 A (-73d) | 2026-11-04 → 2026-09-28 A (-37d) | 0% → 100% | 30d → none | A73680, A10240 → A73680 |
| A73720 | Backfilling & Compaction | 2026-11-10 → 2026-08-20 A (-82d) | 2026-11-14 → 2026-09-28 A (-47d) | 0% → 100% | 26d → none |  |
| A73710 | Testing & Inspection | 2026-11-05 → 2027-01-02 (+58d) | 2026-11-09 → 2027-01-06 (+58d) |  | 26d → 16.98d |  |
| MH-32-A-10 /MH-32A-09 | **MH-32-A-10 /MH-32A-09** | 2026-11-01 → 2026-08-20 (-73d) | 2026-11-18 → 2027-01-06 (+49d) |  |  |  |
| A73630 | Excavation | 2026-11-01 → 2026-08-20 A (-73d) | 2026-11-04 → 2026-09-28 A (-37d) | 0% → 100% | 26d → none |  |
| A73640 | Pipe Laying | 2026-11-05 → 2026-08-20 A (-77d) | 2026-11-09 → 2026-09-28 A (-42d) | 0% → 100% | 26d → none | A73630, A11160 → A73630 |
| A73650 | Install Manhole | 2026-11-05 → 2026-08-20 A (-77d) | 2026-11-09 → 2026-09-28 A (-42d) | 0% → 100% | 30d → none | A73630, A10240 → A73630 |
| A73670 | Backfilling & Compaction | 2026-11-15 → 2026-08-20 A (-87d) | 2026-11-18 → 2026-09-28 A (-51d) | 0% → 100% | 26d → none |  |
| A73660 | Testing & Inspection | 2026-11-10 → 2027-01-02 (+53d) | 2026-11-14 → 2027-01-06 (+53d) |  | 26d → 16.98d |  |
| MH-32-A-11 /MH-32A-10 | **MH-32-A-11 /MH-32A-10** | 2026-11-05 → 2027-01-02 (+58d) | 2026-11-23 → 2027-01-20 (+58d) |  |  |  |
| A73580 | Excavation | 2026-11-05 → 2027-01-02 (+58d) | 2026-11-09 → 2027-01-06 (+58d) |  | 26d → 8.98d |  |
| A73590 | Pipe Laying | 2026-11-10 → 2027-01-06 (+57d) | 2026-11-14 → 2027-01-11 (+58d) |  | 26d → 8.98d | A73580, A11160 → A73580 |
| A73600 | Install Manhole | 2026-11-10 → 2027-01-06 (+57d) | 2026-11-14 → 2027-01-11 (+58d) |  | 30d → 12.98d | A73580, A10240 → A73580 |
| A73610 | Testing & Inspection | 2026-11-15 → 2027-01-11 (+57d) | 2026-11-18 → 2027-01-16 (+59d) |  | 26d → 8.98d |  |
| A73620 | Backfilling & Compaction | 2026-11-19 → 2027-01-16 (+58d) | 2026-11-23 → 2027-01-20 (+58d) |  | 26d → 8.98d |  |
| MH-32-A-12 /MH-32-A-11 | **MH-32-A-12 /MH-32-A-11** | 2026-11-10 → 2026-08-20 (-82d) | 2026-11-28 → 2027-01-11 (+44d) |  |  |  |
| A73530 | Excavation | 2026-11-10 → 2026-08-20 A (-82d) | 2026-11-14 → 2026-09-28 A (-47d) | 0% → 100% | 26d → none |  |
| A73540 | Pipe Laying | 2026-11-15 → 2026-08-20 A (-87d) | 2026-11-18 → 2026-09-28 A (-51d) | 0% → 100% | 26d → none | A73530, A11160 → A73530 |
| A73550 | Install Manhole | 2026-11-15 → 2026-08-20 A (-87d) | 2026-11-18 → 2026-09-28 A (-51d) | 0% → 100% | 30d → none | A73530, A10240 → A73530 |
| A73570 | Backfilling & Compaction | 2026-11-24 → 2026-08-20 A (-96d) | 2026-11-28 → 2026-09-28 A (-61d) | 0% → 100% | 26d → none |  |
| A73560 | Testing & Inspection | 2026-11-19 → 2027-01-06 (+48d) | 2026-11-23 → 2027-01-11 (+49d) |  | 26d → 16.98d |  |
| MH-32-A-12-1 /MH-32-A-12 | **MH-32-A-12-1 /MH-32-A-12** | 2026-11-15 → 2026-08-20 (-87d) | 2026-12-02 → 2027-01-11 (+40d) |  |  |  |
| A73480 | Excavation | 2026-11-15 → 2026-08-20 A (-87d) | 2026-11-18 → 2026-09-28 A (-51d) | 0% → 100% | 26d → none |  |
| A73490 | Pipe Laying | 2026-11-19 → 2026-08-20 A (-91d) | 2026-11-23 → 2026-09-28 A (-56d) | 0% → 100% | 26d → none | A73480, A11160 → A73480 |
| A73500 | Install Manhole | 2026-11-19 → 2026-08-20 A (-91d) | 2026-11-23 → 2026-09-28 A (-56d) | 0% → 100% | 30d → none | A73480, A10240 → A73480 |
| A73520 | Backfilling & Compaction | 2026-11-29 → 2026-08-20 A (-101d) | 2026-12-02 → 2026-09-28 A (-65d) | 0% → 100% | 26d → none |  |
| A73510 | Testing & Inspection | 2026-11-24 → 2027-01-06 (+43d) | 2026-11-28 → 2027-01-11 (+44d) |  | 26d → 16.98d |  |
| MH-32-A-12-2 /MH-32-A-12-1 | **MH-32-A-12-2 /MH-32-A-12-1** | 2026-11-19 → 2026-08-20 (-91d) | 2026-12-07 → 2027-01-11 (+35d) |  |  |  |
| A73430 | Excavation | 2026-11-19 → 2026-08-20 A (-91d) | 2026-11-23 → 2026-09-28 A (-56d) | 0% → 100% | 26d → none |  |
| A73440 | Pipe Laying | 2026-11-24 → 2026-08-20 A (-96d) | 2026-11-28 → 2026-09-28 A (-61d) | 0% → 100% | 26d → none | A73430, A11160 → A73430 |
| A73450 | Install Manhole | 2026-11-24 → 2026-08-20 A (-96d) | 2026-11-28 → 2026-09-28 A (-61d) | 0% → 100% | 30d → none | A73430, A10240 → A73430 |
| A73470 | Backfilling & Compaction | 2026-12-03 → 2026-08-20 A (-105d) | 2026-12-07 → 2026-09-28 A (-70d) | 0% → 100% | 26d → none |  |
| A73460 | Testing & Inspection | 2026-11-29 → 2027-01-06 (+38d) | 2026-12-02 → 2027-01-11 (+40d) |  | 26d → 16.98d |  |
| MH-32-A-12-3 /MH-32-A-12-2 | **MH-32-A-12-3 /MH-32-A-12-2** | 2026-11-24 → 2026-08-20 (-96d) | 2026-12-12 → 2027-01-11 (+30d) |  |  |  |
| A73380 | Excavation | 2026-11-24 → 2026-08-20 A (-96d) | 2026-11-28 → 2026-09-28 A (-61d) | 0% → 100% | 26d → none |  |
| A73390 | Pipe Laying | 2026-11-29 → 2026-08-20 A (-101d) | 2026-12-02 → 2026-09-28 A (-65d) | 0% → 100% | 26d → none | A73380, A11160 → A73380 |
| A73400 | Install Manhole | 2026-11-29 → 2026-08-20 A (-101d) | 2026-12-02 → 2026-09-28 A (-65d) | 0% → 100% | 30d → none | A73380, A10240 → A73380 |
| A73420 | Backfilling & Compaction | 2026-12-08 → 2026-08-20 A (-110d) | 2026-12-12 → 2026-09-28 A (-75d) | 0% → 100% | 26d → none |  |
| A73410 | Testing & Inspection | 2026-12-03 → 2027-01-06 (+34d) | 2026-12-07 → 2027-01-11 (+35d) |  | 26d → 16.98d |  |
| MH-32-A-12-4 /MH-32-A-12-3 | **MH-32-A-12-4 /MH-32-A-12-3** | 2026-11-29 → 2026-08-20 (-101d) | 2026-12-16 → 2027-01-11 (+26d) |  |  |  |
| A73330 | Excavation | 2026-11-29 → 2026-08-20 A (-101d) | 2026-12-02 → 2026-09-28 A (-65d) | 0% → 100% | 26d → none |  |
| A73340 | Pipe Laying | 2026-12-03 → 2026-08-20 A (-105d) | 2026-12-07 → 2026-09-28 A (-70d) | 0% → 100% | 26d → none | A73330, A11160 → A73330 |
| A73350 | Install Manhole | 2026-12-03 → 2026-08-20 A (-105d) | 2026-12-07 → 2026-09-28 A (-70d) | 0% → 100% | 30d → none | A73330, A10240 → A73330 |
| A73370 | Backfilling & Compaction | 2026-12-13 → 2026-08-20 A (-115d) | 2026-12-16 → 2026-09-28 A (-79d) | 0% → 100% | 26d → none |  |
| A73360 | Testing & Inspection | 2026-12-08 → 2027-01-06 (+29d) | 2026-12-12 → 2027-01-11 (+30d) |  | 26d → 16.98d |  |
| MH-32-A-12-5 /MH-32-A-12-6 | **MH-32-A-12-5 /MH-32-A-12-6** | 2026-12-03 → 2026-08-20 (-105d) | 2026-12-21 → 2027-01-11 (+21d) |  |  |  |
| A73280 | Excavation | 2026-12-03 → 2026-08-20 A (-105d) | 2026-12-07 → 2026-09-28 A (-70d) | 0% → 100% | 26d → none |  |
| A73290 | Pipe Laying | 2026-12-08 → 2026-08-20 A (-110d) | 2026-12-12 → 2026-09-28 A (-75d) | 0% → 100% | 26d → none | A73280, A11160 → A73280 |
| A73300 | Install Manhole | 2026-12-08 → 2026-08-20 A (-110d) | 2026-12-12 → 2026-09-28 A (-75d) | 0% → 100% | 30d → none | A73280, A10240 → A73280 |
| A73320 | Backfilling & Compaction | 2026-12-17 → 2026-08-20 A (-119d) | 2026-12-21 → 2026-09-28 A (-84d) | 0% → 100% | 26d → none |  |
| A73310 | Testing & Inspection | 2026-12-13 → 2027-01-06 (+24d) | 2026-12-16 → 2027-01-11 (+26d) |  | 26d → 16.98d |  |
| MH-32-A-12-6 /MH-32-A-12-5 | **MH-32-A-12-6 /MH-32-A-12-5** | 2026-12-08 → 2026-08-20 (-110d) | 2026-12-26 → 2027-01-11 (+16d) |  |  |  |
| A73230 | Excavation | 2026-12-08 → 2026-08-20 A (-110d) | 2026-12-12 → 2026-09-28 A (-75d) | 0% → 100% | 26d → none |  |
| A73240 | Pipe Laying | 2026-12-13 → 2026-08-20 A (-115d) | 2026-12-16 → 2026-09-28 A (-79d) | 0% → 100% | 26d → none | A73230, A11160 → A73230 |

| ID | Task | Start | Finish | Complete | Total float | Predecessors |
| --- | --- | --- | --- | --- | --- | --- |
| A73250 | Install Manhole | 2026-12-13 → 2026-08-20 A (-115d) | 2026-12-16 → 2026-09-28 A (-79d) | 0% → 100% | 30d → none | A73230, A10240 → A73230 |
| A73270 | Backfilling & Compaction | 2026-12-22 → 2026-08-20 A (-124d) | 2026-12-26 → 2026-09-28 A (-89d) | 0% → 100% | 26d → none |  |
| A73260 | Testing & Inspection | 2026-12-17 → 2027-01-06 (+20d) | 2026-12-21 → 2027-01-11 (+21d) |  | 26d → 16.98d |  |
| MH-32-A-12-7 /MH-32-A-12-6 | **MH-32-A-12-7 /MH-32-A-12-6** | 2026-12-13 → 2026-08-20 (-115d) | 2026-12-30 → 2027-01-11 (+12d) |  |  |  |
| A73180 | Excavation | 2026-12-13 → 2026-08-20 A (-115d) | 2026-12-16 → 2026-09-28 A (-79d) | 0% → 100% | 26d → none |  |
| A73190 | Pipe Laying | 2026-12-17 → 2026-08-20 A (-119d) | 2026-12-21 → 2026-09-28 A (-84d) | 0% → 100% | 26d → none | A73180, A11160 → A73180 |
| A73200 | Install Manhole | 2026-12-17 → 2026-08-20 A (-119d) | 2026-12-21 → 2026-09-28 A (-84d) | 0% → 100% | 30d → none | A73180, A10240 → A73180 |
| A73220 | Backfilling & Compaction | 2026-12-27 → 2026-08-20 A (-129d) | 2026-12-30 → 2026-09-28 A (-93d) | 0% → 100% | 26d → none |  |
| A73210 | Testing & Inspection | 2026-12-22 → 2027-01-06 (+15d) | 2026-12-26 → 2027-01-11 (+16d) |  | 26d → 16.98d |  |
| MH-32-A-12-8 /MH-32-A-12-7 | **MH-32-A-12-8 /MH-32-A-12-7** | 2026-12-17 → 2026-08-20 (-119d) | 2027-01-04 → 2027-01-25 (+21d) |  |  |  |
| A73130 | Excavation | 2026-12-17 → 2026-08-20 A (-119d) | 2026-12-21 → 2026-09-28 A (-84d) | 0% → 100% | 26d → none |  |
| A73140 | Pipe Laying | 2026-12-22 → 2026-08-20 A (-124d) | 2026-12-26 → 2026-09-28 A (-89d) | 0% → 100% | 26d → none | A73130, A11160 → A73130 |
| A73150 | Install Manhole | 2026-12-22 → 2026-08-20 A (-124d) | 2026-12-26 → 2026-09-28 A (-89d) | 0% → 100% | 30d → none | A73130, A10240 → A73130 |
| A73160 | Testing & Inspection | 2026-12-27 → 2027-01-06 (+10d) | 2026-12-30 → 2027-01-11 (+12d) |  | 26d → 16.98d |  |
| A73170 | Backfilling & Compaction | 2026-12-31 → 2027-01-20 (+20d) | 2027-01-04 → 2027-01-25 (+21d) |  | 26d → 8.98d |  |
| MH-32A-02 /MH-32A-01 | **MH-32A-02 /MH-32A-01** | 2026-09-24 → 2026-08-20 (-35d) | 2026-10-10 → 2027-01-04 (+86d) |  |  |  |
| A74030 | Excavation | 2026-09-24 → 2026-08-20 A (-35d) | 2026-09-28 A | 0% → 100% | 26d → none |  |
| A74040 | Pipe Laying | 2026-09-29 → 2026-08-20 A (-40d) | 2026-10-03 → 2026-09-28 A (-5d) | 0% → 100% | 28d → none | A74030, A11160 → A74030 |
| A74050 | Install Manhole | 2026-09-29 → 2026-08-20 A (-40d) | 2026-10-03 → 2026-09-28 A (-5d) | 0% → 100% | 30d → none | A74030, A10240 → A74030 |
| A74070 | Backfilling & Compaction | 2026-10-06 → 2026-08-20 A (-47d) | 2026-10-10 → 2026-09-28 A (-12d) | 0% → 100% | 28d → none |  |
| A74060 | Testing & Inspection | 2026-10-04 → 2027-01-02 (+90d) | 2026-10-05 → 2027-01-04 (+91d) |  | 28d → 18.98d |  |
| MH-32A-03 /MH-32A-02 | **MH-32A-03 /MH-32A-02** | 2026-09-29 → 2026-08-20 (-40d) | 2026-10-17 → 2027-01-06 (+81d) |  |  |  |
| A73980 | Excavation | 2026-09-29 → 2026-08-20 A (-40d) | 2026-10-03 → 2026-09-28 A (-5d) | 0% → 100% | 26d → none |  |
| A73990 | Pipe Laying | 2026-10-04 → 2026-08-20 A (-45d) | 2026-10-07 → 2026-09-28 A (-9d) | 0% → 100% | 26d → none | A73980, A11160 → A73980 |
| A74000 | Install Manhole | 2026-10-04 → 2026-08-20 A (-45d) | 2026-10-07 → 2026-09-28 A (-9d) | 0% → 100% | 30d → none | A73980, A10240 → A73980 |
| A74020 | Backfilling & Compaction | 2026-10-13 → 2026-08-20 A (-54d) | 2026-10-17 → 2026-09-28 A (-19d) | 0% → 100% | 26d → none |  |
| A74010 | Testing & Inspection | 2026-10-08 → 2027-01-02 (+86d) | 2026-10-12 → 2027-01-06 (+86d) |  | 26d → 16.98d |  |
| LR 03 | **LR 03** | 2026-09-24 → 2026-08-20 (-35d) | 2027-01-03 → 2027-02-11 (+39d) |  |  |  |
| MH-32-A-21 /MH-32-A-21-1 | **MH-32-A-21 /MH-32-A-21-1** | 2026-12-21 → 2026-08-20 (-123d) | 2027-01-03 → 2027-02-04 (+32d) |  |  |  |
| A71780 | Excavation | 2026-12-21 → 2026-08-20 A (-123d) | 2026-12-23 → 2026-09-28 A (-86d) | 0% → 100% | 15d → none |  |
| A71790 | Pipe Laying | 2026-12-24 → 2026-08-20 A (-126d) | 2026-12-27 → 2026-09-28 A (-90d) | 0% → 100% | 15d → none | A71780, A11160 → A71780 |
| A71800 | Install Manhole | 2026-12-24 → 2026-08-20 A (-126d) | 2026-12-27 → 2026-09-28 A (-90d) | 0% → 100% | 18d → none |  |
| A71820 | Backfilling & Compaction | 2026-12-31 → 2026-08-20 A (-133d) | 2027-01-03 → 2026-09-28 A (-97d) | 0% → 100% | 15d → none |  |
| A71810 | Testing & Inspection | 2026-12-28 → 2027-02-01 (+35d) | 2026-12-30 → 2027-02-04 (+36d) |  | 15d → -5.02d |  |
| MH-32-A-22 /MH-32-A-21 | **MH-32-A-22 /MH-32-A-21** | 2026-12-17 → 2026-08-20 (-119d) | 2026-12-30 → 2027-02-04 (+36d) |  |  |  |
| A71830 | Excavation | 2026-12-17 → 2026-08-20 A (-119d) | 2026-12-20 → 2026-09-28 A (-83d) | 0% → 100% | 15d → none |  |
| A71840 | Pipe Laying | 2026-12-21 → 2026-08-20 A (-123d) | 2026-12-23 → 2026-09-28 A (-86d) | 0% → 100% | 15d → none | A71830, A11160 → A71830 |
| A71850 | Install Manhole | 2026-12-21 → 2026-08-20 A (-123d) | 2026-12-23 → 2026-09-28 A (-86d) | 0% → 100% | 18d → none |  |
| A71870 | Backfilling & Compaction | 2026-12-28 → 2026-08-20 A (-130d) | 2026-12-30 → 2026-09-28 A (-93d) | 0% → 100% | 15d → none |  |
| A71860 | Testing & Inspection | 2026-12-24 → 2027-02-01 (+39d) | 2026-12-27 → 2027-02-04 (+39d) |  | 15d → -5.02d |  |
| MH-32-A-23 /MH-32-A-22 | **MH-32-A-23 /MH-32-A-22** | 2026-12-14 → 2026-08-20 (-116d) | 2026-12-27 → 2027-02-04 (+39d) |  |  |  |
| A71880 | Excavation | 2026-12-14 → 2026-08-20 A (-116d) | 2026-12-16 → 2026-09-28 A (-79d) | 0% → 100% | 15d → none |  |
| A71890 | Pipe Laying | 2026-12-17 → 2026-08-20 A (-119d) | 2026-12-20 → 2026-09-28 A (-83d) | 0% → 100% | 15d → none | A71880, A11160 → A71880 |
| A71900 | Install Manhole | 2026-12-17 → 2026-08-20 A (-119d) | 2026-12-20 → 2026-09-28 A (-83d) | 0% → 100% | 18d → none |  |
| A71920 | Backfilling & Compaction | 2026-12-24 → 2026-08-20 A (-126d) | 2026-12-27 → 2026-09-28 A (-90d) | 0% → 100% | 15d → none |  |
| A71910 | Testing & Inspection | 2026-12-21 → 2027-02-01 (+42d) | 2026-12-23 → 2027-02-04 (+43d) |  | 15d → -5.02d |  |
| MH-32-A-24 /MH-32-A-23 | **MH-32-A-24 /MH-32-A-23** | 2026-12-10 → 2026-08-20 (-112d) | 2026-12-23 → 2027-02-04 (+43d) |  |  |  |
| A71930 | Excavation | 2026-12-10 → 2026-08-20 A (-112d) | 2026-12-13 → 2026-09-28 A (-76d) | 0% → 100% | 15d → none |  |
| A71940 | Pipe Laying | 2026-12-14 → 2026-08-20 A (-116d) | 2026-12-16 → 2026-09-28 A (-79d) | 0% → 100% | 15d → none | A71930, A11160 → A71930 |
| A71950 | Install Manhole | 2026-12-14 → 2026-08-20 A (-116d) | 2026-12-16 → 2026-09-28 A (-79d) | 0% → 100% | 18d → none |  |
| A71970 | Backfilling & Compaction | 2026-12-21 → 2026-08-20 A (-123d) | 2026-12-23 → 2026-09-28 A (-86d) | 0% → 100% | 15d → none |  |
| A71960 | Testing & Inspection | 2026-12-17 → 2027-02-01 (+46d) | 2026-12-20 → 2027-02-04 (+46d) |  | 15d → -5.02d |  |
| MH-32-A-25 /MH-32-A-24 | **MH-32-A-25 /MH-32-A-24** | 2026-12-07 → 2026-08-20 (-109d) | 2026-12-20 → 2027-02-04 (+46d) |  |  |  |
| A71980 | Excavation | 2026-12-07 → 2026-08-20 A (-109d) | 2026-12-09 → 2026-09-28 A (-72d) | 0% → 100% | 15d → none |  |
| A71990 | Pipe Laying | 2026-12-10 → 2026-08-20 A (-112d) | 2026-12-13 → 2026-09-28 A (-76d) | 0% → 100% | 15d → none | A71980, A11160 → A71980 |
| A72000 | Install Manhole | 2026-12-10 → 2026-08-20 A (-112d) | 2026-12-13 → 2026-09-28 A (-76d) | 0% → 100% | 18d → none |  |
| A72020 | Backfilling & Compaction | 2026-12-17 → 2026-08-20 A (-119d) | 2026-12-20 → 2026-09-28 A (-83d) | 0% → 100% | 15d → none |  |
| A72010 | Testing & Inspection | 2026-12-14 → 2027-02-01 (+49d) | 2026-12-16 → 2027-02-04 (+50d) |  | 15d → -5.02d |  |
| MH-32-A-26 /MH-32-A-25 | **MH-32-A-26 /MH-32-A-25** | 2026-12-03 → 2027-01-28 (+56d) | 2026-12-16 → 2027-02-11 (+57d) |  |  |  |
| A72030 | Excavation | 2026-12-03 → 2027-01-28 (+56d) | 2026-12-06 → 2027-02-01 (+57d) |  | 15d → -11.02d |  |
| A72040 | Pipe Laying | 2026-12-07 → 2027-02-01 (+56d) | 2026-12-09 → 2027-02-04 (+57d) |  | 15d → -11.02d | A72030, A11160 → A72030 |
| A72050 | Install Manhole | 2026-12-07 → 2027-02-01 (+56d) | 2026-12-09 → 2027-02-04 (+57d) |  | 18d → -8.02d |  |
| A72060 | Testing & Inspection | 2026-12-10 → 2027-02-04 (+56d) | 2026-12-13 → 2027-02-08 (+57d) |  | 15d → -11.02d |  |
| A72070 | Backfilling & Compaction | 2026-12-14 → 2027-02-08 (+56d) | 2026-12-16 → 2027-02-11 (+57d) |  | 15d → -11.02d |  |
| MH-32-A-27 /MH-32-A-26 | **MH-32-A-27 /MH-32-A-26** | 2026-11-30 → 2027-01-25 (+56d) | 2026-12-13 → 2027-02-08 (+57d) |  |  |  |
| A72080 | Excavation | 2026-11-30 → 2027-01-25 (+56d) | 2026-12-02 → 2027-01-28 (+57d) |  | 15d → -11.02d |  |
| A72090 | Pipe Laying | 2026-12-03 → 2027-01-28 (+56d) | 2026-12-06 → 2027-02-01 (+57d) |  | 15d → -11.02d | A72080, A11160 → A72080 |
| A72100 | Install Manhole | 2026-12-03 → 2027-01-28 (+56d) | 2026-12-06 → 2027-02-01 (+57d) |  | 18d → -8.02d |  |
| A72110 | Testing & Inspection | 2026-12-07 → 2027-02-01 (+56d) | 2026-12-09 → 2027-02-04 (+57d) |  | 15d → -11.02d |  |
| A72120 | Backfilling & Compaction | 2026-12-10 → 2027-02-04 (+56d) | 2026-12-13 → 2027-02-08 (+57d) |  | 15d → -11.02d |  |

| ID | Task | Start | Finish | Complete | Total float | Predecessors |
| --- | --- | --- | --- | --- | --- | --- |
| MH-A45 /MH-A44 | **MH-A45 /MH-A44** | 2026-09-24 → 2027-01-02 (+100d) | 2026-10-03 → 2027-01-11 (+100d) |  |  |  |
| A72930 | Excavation | 2026-09-24 → 2027-01-02 (+100d) | 2026-09-26 → 2027-01-04 (+100d) |  | 5d → -18.02d |  |
| A72940 | Pipe Laying | 2026-09-27 → 2027-01-04 (+99d) | 2026-09-28 → 2027-01-06 (+100d) |  | 5d → -18.02d | A72930, A11160 → A72930 |
| A72950 | Install Manhole | 2026-09-27 → 2027-01-04 (+99d) | 2026-09-28 → 2027-01-06 (+100d) |  | 7d → -16.02d |  |
| A72960 | Testing & Inspection | 2026-09-29 → 2027-01-06 (+99d) | 2026-09-30 → 2027-01-09 (+101d) |  | 5d → -18.02d |  |
| A72970 | Backfilling & Compaction | 2026-10-01 → 2027-01-09 (+100d) | 2026-10-03 → 2027-01-11 (+100d) |  | 5d → -18.02d |  |
| MH-A46 /MH-A45 | **MH-A46 /MH-A45** | 2026-09-27 → 2026-08-20 (-38d) | 2026-10-05 → 2026-09-28 (-7d) |  |  |  |
| A72980 | Excavation | 2026-09-27 → 2026-08-20 A (-38d) | 2026-09-28 A | 0% → 100% | 15d → none |  |
| A72990 | Pipe Laying | 2026-09-29 → 2026-08-20 A (-40d) | 2026-09-30 → 2026-09-28 A (-2d) | 0% → 100% | 18d → none | A72980, A11160 → A72980 |
| A73000 | Install Manhole | 2026-09-29 → 2026-08-20 A (-40d) | 2026-09-30 → 2026-09-28 A (-2d) | 0% → 100% | 20d → none |  |
| A73010 | Testing & Inspection | 2026-10-01 → 2026-08-20 A (-42d) | 2026-10-03 → 2026-09-28 A (-5d) | 0% → 100% | 18d → none |  |
| A73020 | Backfilling & Compaction | 2026-10-04 → 2026-08-20 A (-45d) | 2026-10-05 → 2026-09-28 A (-7d) | 0% → 100% | 18d → none |  |
| MH-A47 /MH-A46 | **MH-A47 /MH-A46** | 2026-09-29 → 2026-08-20 (-40d) | 2026-10-07 → 2026-09-28 (-9d) |  |  |  |
| A73030 | Excavation | 2026-09-29 → 2026-08-20 A (-40d) | 2026-09-30 → 2026-09-28 A (-2d) | 0% → 100% | 15d → none |  |
| A73040 | Pipe Laying | 2026-10-01 → 2026-08-20 A (-42d) | 2026-10-03 → 2026-09-28 A (-5d) | 0% → 100% | 18d → none | A73030, A11160 → A73030 |
| A73050 | Install Manhole | 2026-10-01 → 2026-08-20 A (-42d) | 2026-10-03 → 2026-09-28 A (-5d) | 0% → 100% | 20d → none |  |
| A73060 | Testing & Inspection | 2026-10-04 → 2026-08-20 A (-45d) | 2026-10-05 → 2026-09-28 A (-7d) | 0% → 100% | 18d → none |  |
| A73070 | Backfilling & Compaction | 2026-10-06 → 2026-08-20 A (-47d) | 2026-10-07 → 2026-09-28 A (-9d) | 0% → 100% | 18d → none |  |
| MH-A48 /MH-A47 | **MH-A48 /MH-A47** | 2026-10-01 → 2026-08-20 (-42d) | 2026-10-14 → 2026-09-28 (-16d) |  |  |  |
| A73080 | Excavation | 2026-10-01 → 2026-08-20 A (-42d) | 2026-10-04 → 2026-09-28 A (-6d) | 0% → 100% | 15d → none |  |
| A73090 | Pipe Laying | 2026-10-05 → 2026-08-20 A (-46d) | 2026-10-07 → 2026-09-28 A (-9d) | 0% → 100% | 15d → none | A73080, A11160 → A73080 |
| A73100 | Install Manhole | 2026-10-05 → 2026-08-20 A (-46d) | 2026-10-07 → 2026-09-28 A (-9d) | 0% → 100% | 18d → none |  |
| A73110 | Testing & Inspection | 2026-10-08 → 2026-08-20 A (-49d) | 2026-10-11 → 2026-09-28 A (-13d) | 0% → 100% | 15d → none |  |
| A73120 | Backfilling & Compaction | 2026-10-12 → 2026-08-20 A (-53d) | 2026-10-14 → 2026-09-28 A (-16d) | 0% → 100% | 15d → none |  |
| MH-A49 /MH-A48 | **MH-A49 /MH-A48** | 2026-10-05 → 2026-08-20 (-46d) | 2026-10-18 → 2026-09-28 (-20d) |  |  |  |
| A72880 | Excavation | 2026-10-05 → 2026-08-20 A (-46d) | 2026-10-07 → 2026-09-28 A (-9d) | 0% → 100% | 15d → none |  |
| A72890 | Pipe Laying | 2026-10-08 → 2026-08-20 A (-49d) | 2026-10-11 → 2026-09-28 A (-13d) | 0% → 100% | 15d → none | A72880, A11160 → A72880 |
| A72900 | Install Manhole | 2026-10-08 → 2026-08-20 A (-49d) | 2026-10-11 → 2026-09-28 A (-13d) | 0% → 100% | 18d → none |  |
| A72910 | Testing & Inspection | 2026-10-12 → 2026-08-20 A (-53d) | 2026-10-14 → 2026-09-28 A (-16d) | 0% → 100% | 15d → none |  |
| A72920 | Backfilling & Compaction | 2026-10-15 → 2026-08-20 A (-56d) | 2026-10-18 → 2026-09-28 A (-20d) | 0% → 100% | 15d → none |  |
| MH-A50 /MH-A49 | **MH-A50 /MH-A49** | 2026-10-08 → 2026-08-20 (-49d) | 2026-10-21 → 2026-09-28 (-23d) |  |  |  |
| A72830 | Excavation | 2026-10-08 → 2026-08-20 A (-49d) | 2026-10-11 → 2026-09-28 A (-13d) | 0% → 100% | 15d → none |  |
| A72840 | Pipe Laying | 2026-10-12 → 2026-08-20 A (-53d) | 2026-10-14 → 2026-09-28 A (-16d) | 0% → 100% | 15d → none | A72830, A11160 → A72830 |
| A72850 | Install Manhole | 2026-10-12 → 2026-08-20 A (-53d) | 2026-10-14 → 2026-09-28 A (-16d) | 0% → 100% | 18d → none |  |
| A72860 | Testing & Inspection | 2026-10-15 → 2026-08-20 A (-56d) | 2026-10-18 → 2026-09-28 A (-20d) | 0% → 100% | 15d → none |  |
| A72870 | Backfilling & Compaction | 2026-10-19 → 2026-08-20 A (-60d) | 2026-10-21 → 2026-09-28 A (-23d) | 0% → 100% | 15d → none |  |
| MH-A51 /MH-A50 | **MH-A51 /MH-A50** | 2026-10-12 → 2026-08-20 (-53d) | 2026-10-25 → 2026-09-28 (-27d) |  |  |  |
| A72780 | Excavation | 2026-10-12 → 2026-08-20 A (-53d) | 2026-10-14 → 2026-09-28 A (-16d) | 0% → 100% | 15d → none |  |
| A72790 | Pipe Laying | 2026-10-15 → 2026-08-20 A (-56d) | 2026-10-18 → 2026-09-28 A (-20d) | 0% → 100% | 15d → none | A72780, A11160 → A72780 |
| A72800 | Install Manhole | 2026-10-15 → 2026-08-20 A (-56d) | 2026-10-18 → 2026-09-28 A (-20d) | 0% → 100% | 18d → none |  |
| A72810 | Testing & Inspection | 2026-10-19 → 2026-08-20 A (-60d) | 2026-10-21 → 2026-09-28 A (-23d) | 0% → 100% | 15d → none |  |
| A72820 | Backfilling & Compaction | 2026-10-22 → 2026-08-20 A (-63d) | 2026-10-25 → 2026-09-28 A (-27d) | 0% → 100% | 15d → none |  |
| MH-A52 /MH-A51 | **MH-A52 /MH-A51** | 2026-10-15 → 2026-08-20 (-56d) | 2026-10-28 → 2026-09-28 (-30d) |  |  |  |
| A72730 | Excavation | 2026-10-15 → 2026-08-20 A (-56d) | 2026-10-18 → 2026-09-28 A (-20d) | 0% → 100% | 15d → none |  |
| A72740 | Pipe Laying | 2026-10-19 → 2026-08-20 A (-60d) | 2026-10-21 → 2026-09-28 A (-23d) | 0% → 100% | 15d → none | A72730, A11160 → A72730 |
| A72750 | Install Manhole | 2026-10-19 → 2026-08-20 A (-60d) | 2026-10-21 → 2026-09-28 A (-23d) | 0% → 100% | 18d → none |  |
| A72760 | Testing & Inspection | 2026-10-22 → 2026-08-20 A (-63d) | 2026-10-25 → 2026-09-28 A (-27d) | 0% → 100% | 15d → none |  |
| A72770 | Backfilling & Compaction | 2026-10-26 → 2026-08-20 A (-67d) | 2026-10-28 → 2026-09-28 A (-30d) | 0% → 100% | 15d → none |  |
| MH-A53 /MH-A52 | **MH-A53 /MH-A52** | 2026-10-19 → 2026-08-20 (-60d) | 2026-11-01 → 2027-01-07 (+67d) |  |  |  |
| A72680 | Excavation | 2026-10-19 → 2026-08-20 A (-60d) | 2026-10-21 → 2026-09-28 A (-23d) | 0% → 100% | 15d → none |  |
| A72690 | Pipe Laying | 2026-10-22 → 2026-08-20 A (-63d) | 2026-10-25 → 2026-09-28 A (-27d) | 0% → 100% | 15d → none | A72680, A11160 → A72680 |
| A72700 | Install Manhole | 2026-10-22 → 2026-08-20 A (-63d) | 2026-10-25 → 2026-09-28 A (-27d) | 0% → 100% | 18d → none |  |
| A72720 | Backfilling & Compaction | 2026-10-29 → 2026-08-20 A (-70d) | 2026-11-01 → 2026-09-28 A (-34d) | 0% → 100% | 15d → none |  |
| A72710 | Testing & Inspection | 2026-10-26 → 2027-01-04 (+70d) | 2026-10-28 → 2027-01-07 (+71d) |  | 15d → 23.98d |  |
| MH-A54 /MH-A53 | **MH-A54 /MH-A53** | 2026-10-22 → 2026-08-20 (-63d) | 2026-11-04 → 2027-01-07 (+64d) |  |  |  |
| A72630 | Excavation | 2026-10-22 → 2026-08-20 A (-63d) | 2026-10-25 → 2026-09-28 A (-27d) | 0% → 100% | 15d → none |  |
| A72640 | Pipe Laying | 2026-10-26 → 2026-08-20 A (-67d) | 2026-10-28 → 2026-09-28 A (-30d) | 0% → 100% | 15d → none | A72630, A11160 → A72630 |
| A72650 | Install Manhole | 2026-10-26 → 2026-08-20 A (-67d) | 2026-10-28 → 2026-09-28 A (-30d) | 0% → 100% | 18d → none |  |
| A72670 | Backfilling & Compaction | 2026-11-02 → 2026-08-20 A (-74d) | 2026-11-04 → 2026-09-28 A (-37d) | 0% → 100% | 15d → none |  |
| A72660 | Testing & Inspection | 2026-10-29 → 2027-01-04 (+67d) | 2026-11-01 → 2027-01-07 (+67d) |  | 15d → 23.98d |  |
| MH-A55 /MH-A54 | **MH-A55 /MH-A54** | 2026-10-26 → 2026-08-20 (-67d) | 2026-11-08 → 2027-01-07 (+60d) |  |  |  |
| A72580 | Excavation | 2026-10-26 → 2026-08-20 A (-67d) | 2026-10-28 → 2026-09-28 A (-30d) | 0% → 100% | 15d → none |  |
| A72590 | Pipe Laying | 2026-10-29 → 2026-08-20 A (-70d) | 2026-11-01 → 2026-09-28 A (-34d) | 0% → 100% | 15d → none | A72580, A11160 → A72580 |
| A72600 | Install Manhole | 2026-10-29 → 2026-08-20 A (-70d) | 2026-11-01 → 2026-09-28 A (-34d) | 0% → 100% | 18d → none |  |
| A72620 | Backfilling & Compaction | 2026-11-05 → 2026-08-20 A (-77d) | 2026-11-08 → 2026-09-28 A (-41d) | 0% → 100% | 15d → none |  |
| A72610 | Testing & Inspection | 2026-11-02 → 2027-01-04 (+63d) | 2026-11-04 → 2027-01-07 (+64d) |  | 15d → 23.98d |  |
| MH-A56 /MH-A55 | **MH-A56 /MH-A55** | 2026-10-29 → 2026-08-20 (-70d) | 2026-11-11 → 2027-01-07 (+57d) |  |  |  |
| A72530 | Excavation | 2026-10-29 → 2026-08-20 A (-70d) | 2026-11-01 → 2026-09-28 A (-34d) | 0% → 100% | 15d → none |  |
| A72540 | Pipe Laying | 2026-11-02 → 2026-08-20 A (-74d) | 2026-11-04 → 2026-09-28 A (-37d) | 0% → 100% | 15d → none | A72530, A11160 → A72530 |
| A72550 | Install Manhole | 2026-11-02 → 2026-08-20 A (-74d) | 2026-11-04 → 2026-09-28 A (-37d) | 0% → 100% | 18d → none |  |

| ID | Task | Start | Finish | Duration | Complete | Total float | Predecessors |
| --- | --- | --- | --- | --- | --- | --- | --- |
| A72570 | Backfilling & Compaction | 2026-11-09 → 2026-08-20 A (-81d) | 2026-11-11 → 2026-09-28 A (-44d) |  | 0% → 100% | 15d → none |  |
| A72560 | Testing & Inspection | 2026-11-05 → 2027-01-04 (+60d) | 2026-11-08 → 2027-01-07 (+60d) |  |  | 15d → 23.98d |  |
| MH-A57 /MH-A56 | **MH-A57 /MH-A56** | 2026-11-02 → 2026-09-26 (-37d) | 2026-11-15 → 2027-01-11 (+57d) |  |  |  |  |
| A72480 | Excavation | 2026-11-02 → 2026-09-26 A (-37d) | 2026-11-04 → 2026-10-01 A (-34d) |  | 0% → 100% | 15d → none |  |
| A72490 | Pipe Laying | 2026-11-05 → 2026-09-26 A (-40d) | 2026-11-08 → 2026-10-01 A (-38d) |  | 0% → 100% | 15d → none | A72480, A11160 → A72480 |
| A72500 | Install Manhole | 2026-11-05 → 2026-09-26 A (-40d) | 2026-11-08 → 2026-10-01 A (-38d) |  | 0% → 100% | 18d → none |  |
| A72520 | Backfilling & Compaction | 2026-11-12 → 2026-09-26 A (-47d) | 2026-11-15 → 2026-10-01 A (-45d) |  | 0% → 100% | 15d → none | A72510, A72500, A72570 → A72510, A72500, A72500 FF |
| A72510 | Testing & Inspection | 2026-11-09 → 2027-01-04 (+56d) | 2026-11-11 → 2027-01-11 (+61d) | 3d → 6d |  | 15d → -8.02d |  |
| MH-A58 /MH-A57 | **MH-A58 /MH-A57** | 2026-11-05 → 2027-01-04 (+60d) | 2026-11-18 → 2027-01-18 (+61d) |  |  |  |  |
| A72430 | Excavation | 2026-11-05 → 2027-01-04 (+60d) | 2026-11-08 → 2027-01-07 (+60d) |  |  | 15d → -11.02d |  |
| A72440 | Pipe Laying | 2026-11-09 → 2027-01-07 (+59d) | 2026-11-11 → 2027-01-11 (+61d) |  |  | 15d → -11.02d | A72430, A11160 → A72430 |
| A72450 | Install Manhole | 2026-11-09 → 2027-01-07 (+59d) | 2026-11-11 → 2027-01-11 (+61d) |  |  | 18d → -8.02d |  |
| A72460 | Testing & Inspection | 2026-11-12 → 2027-01-11 (+60d) | 2026-11-15 → 2027-01-14 (+60d) |  |  | 15d → -11.02d |  |
| A72470 | Backfilling & Compaction | 2026-11-16 → 2027-01-14 (+59d) | 2026-11-18 → 2027-01-18 (+61d) |  |  | 15d → -11.02d |  |
| MH-A59 /MH-A58 | **MH-A59 /MH-A58** | 2026-11-09 → 2026-08-20 (-81d) | 2026-11-22 → 2027-01-11 (+50d) |  |  |  |  |
| A72380 | Excavation | 2026-11-09 → 2026-08-20 A (-81d) | 2026-11-11 → 2026-09-28 A (-44d) |  | 0% → 100% | 15d → none |  |
| A72390 | Pipe Laying | 2026-11-12 → 2026-08-20 A (-84d) | 2026-11-15 → 2026-09-28 A (-48d) |  | 0% → 100% | 15d → none | A72380, A11160 → A72380 |
| A72400 | Install Manhole | 2026-11-12 → 2026-08-20 A (-84d) | 2026-11-15 → 2026-09-28 A (-48d) |  | 0% → 100% | 18d → none |  |
| A72420 | Backfilling & Compaction | 2026-11-19 → 2026-08-20 A (-91d) | 2026-11-22 → 2026-09-28 A (-55d) |  | 0% → 100% | 15d → none |  |
| A72410 | Testing & Inspection | 2026-11-16 → 2027-01-07 (+52d) | 2026-11-18 → 2027-01-11 (+54d) |  |  | 15d → -5.02d |  |
| MH-A60 /MH-A59 | **MH-A60 /MH-A59** | 2026-11-12 → 2027-01-07 (+56d) | 2026-11-25 → 2027-01-21 (+57d) |  |  |  |  |
| A72330 | Excavation | 2026-11-12 → 2027-01-07 (+56d) | 2026-11-15 → 2027-01-11 (+57d) |  |  | 15d → -11.02d |  |
| A72340 | Pipe Laying | 2026-11-16 → 2027-01-11 (+56d) | 2026-11-18 → 2027-01-14 (+57d) |  |  | 15d → -11.02d | A72330, A11160 → A72330 |
| A72350 | Install Manhole | 2026-11-16 → 2027-01-11 (+56d) | 2026-11-18 → 2027-01-14 (+57d) |  |  | 18d → -8.02d |  |
| A72360 | Testing & Inspection | 2026-11-19 → 2027-01-14 (+56d) | 2026-11-22 → 2027-01-18 (+57d) |  |  | 15d → -11.02d |  |
| A72370 | Backfilling & Compaction | 2026-11-23 → 2027-01-18 (+56d) | 2026-11-25 → 2027-01-21 (+57d) |  |  | 15d → -11.02d |  |
| MH-A61 /MH-A60 | **MH-A61 /MH-A60** | 2026-11-16 → 2027-01-11 (+56d) | 2026-11-29 → 2027-01-25 (+57d) |  |  |  |  |
| A72280 | Excavation | 2026-11-16 → 2027-01-11 (+56d) | 2026-11-18 → 2027-01-14 (+57d) |  |  | 15d → -11.02d |  |
| A72290 | Pipe Laying | 2026-11-19 → 2027-01-14 (+56d) | 2026-11-22 → 2027-01-18 (+57d) |  |  | 15d → -11.02d | A72280, A11160 → A72280 |
| A72300 | Install Manhole | 2026-11-19 → 2027-01-14 (+56d) | 2026-11-22 → 2027-01-18 (+57d) |  |  | 18d → -8.02d |  |
| A72310 | Testing & Inspection | 2026-11-23 → 2027-01-18 (+56d) | 2026-11-25 → 2027-01-21 (+57d) |  |  | 15d → -11.02d |  |
| A72320 | Backfilling & Compaction | 2026-11-26 → 2027-01-21 (+56d) | 2026-11-29 → 2027-01-25 (+57d) |  |  | 15d → -11.02d |  |
| MH-A62 /MH-A61 | **MH-A62 /MH-A61** | 2026-11-19 → 2027-01-14 (+56d) | 2026-12-02 → 2027-01-28 (+57d) |  |  |  |  |
| A72230 | Excavation | 2026-11-19 → 2027-01-14 (+56d) | 2026-11-22 → 2027-01-18 (+57d) |  |  | 15d → -11.02d |  |
| A72240 | Pipe Laying | 2026-11-23 → 2027-01-18 (+56d) | 2026-11-25 → 2027-01-21 (+57d) |  |  | 15d → -11.02d | A72230, A11160 → A72230 |
| A72250 | Install Manhole | 2026-11-23 → 2027-01-18 (+56d) | 2026-11-25 → 2027-01-21 (+57d) |  |  | 18d → -8.02d |  |
| A72260 | Testing & Inspection | 2026-11-26 → 2027-01-21 (+56d) | 2026-11-29 → 2027-01-25 (+57d) |  |  | 15d → -11.02d |  |
| A72270 | Backfilling & Compaction | 2026-11-30 → 2027-01-25 (+56d) | 2026-12-02 → 2027-01-28 (+57d) |  |  | 15d → -11.02d |  |
| MH-A63 /MH-A62 | **MH-A63 /MH-A62** | 2026-11-23 → 2027-01-18 (+56d) | 2026-12-06 → 2027-02-01 (+57d) |  |  |  |  |
| A72180 | Excavation | 2026-11-23 → 2027-01-18 (+56d) | 2026-11-25 → 2027-01-21 (+57d) |  |  | 15d → -11.02d |  |
| A72190 | Pipe Laying | 2026-11-26 → 2027-01-21 (+56d) | 2026-11-29 → 2027-01-25 (+57d) |  |  | 15d → -11.02d | A72180, A11160 → A72180 |
| A72200 | Install Manhole | 2026-11-26 → 2027-01-21 (+56d) | 2026-11-29 → 2027-01-25 (+57d) |  |  | 18d → -8.02d |  |
| A72210 | Testing & Inspection | 2026-11-30 → 2027-01-25 (+56d) | 2026-12-02 → 2027-01-28 (+57d) |  |  | 15d → -11.02d |  |
| A72220 | Backfilling & Compaction | 2026-12-03 → 2027-01-28 (+56d) | 2026-12-06 → 2027-02-01 (+57d) |  |  | 15d → -11.02d |  |
| MH-A64 /MH-A63 | **MH-A64 /MH-A63** | 2026-11-26 → 2027-01-21 (+56d) | 2026-12-09 → 2027-02-04 (+57d) |  |  |  |  |
| A72130 | Excavation | 2026-11-26 → 2027-01-21 (+56d) | 2026-11-29 → 2027-01-25 (+57d) |  |  | 15d → -11.02d |  |
| A72140 | Pipe Laying | 2026-11-30 → 2027-01-25 (+56d) | 2026-12-02 → 2027-01-28 (+57d) |  |  | 15d → -11.02d | A72130, A11160 → A72130 |
| A72150 | Install Manhole | 2026-11-30 → 2027-01-25 (+56d) | 2026-12-02 → 2027-01-28 (+57d) |  |  | 18d → -8.02d |  |
| A72160 | Testing & Inspection | 2026-12-03 → 2027-01-28 (+56d) | 2026-12-06 → 2027-02-01 (+57d) |  |  | 15d → -11.02d |  |
| A72170 | Backfilling & Compaction | 2026-12-07 → 2027-02-01 (+56d) | 2026-12-09 → 2027-02-04 (+57d) |  |  | 15d → -11.02d |  |
| LR 04 | **LR 04** | 2026-03-28 → 2026-08-20 (+145d) | 2026-12-30 → 2027-01-13 (+14d) |  |  |  |  |
| MH-32-A-16-1 /MH-32-A-16 | **MH-32-A-16-1 /MH-32-A-16** | 2026-03-28 → 2026-08-20 (+145d) | 2026-04-28 → 2026-09-28 (+153d) |  |  |  |  |
| A71730 | Excavation | 2026-03-28 → 2026-08-20 A (+145d) | 2026-03-31 → 2026-09-28 A (+181d) |  | 0% → 100% | 112d → none |  |
| A71740 | Pipe Laying | 2026-04-01 → 2026-08-20 A (+141d) | 2026-04-05 → 2026-09-28 A (+176d) |  | 0% → 100% | 112d → none | A71730, A11160 → A71730 |
| A71750 | Install Manhole | 2026-04-01 → 2026-08-20 A (+141d) | 2026-04-05 → 2026-09-28 A (+176d) |  | 0% → 100% | 122d → none |  |
| A71760 | Testing & Inspection | 2026-04-06 → 2026-08-20 A (+136d) | 2026-04-16 → 2026-09-28 A (+165d) |  | 0% → 100% | 112d → none |  |
| A71770 | Backfilling & Compaction | 2026-04-18 → 2026-08-20 A (+124d) | 2026-04-28 → 2026-09-28 A (+153d) |  | 0% → 100% | 112d → none |  |
| MH-32-A-16-2 /MH-32-A-16-1 | **MH-32-A-16-2 /MH-32-A-16-1** | 2026-09-24 → 2026-08-20 (-35d) | 2026-11-02 → 2026-09-28 (-35d) |  |  |  |  |
| A71680 | Excavation | 2026-09-24 → 2026-08-20 A (-35d) | 2026-09-28 A |  | 0% → 100% | 18d → none |  |
| A71690 | Pipe Laying | 2026-09-29 → 2026-08-20 A (-40d) | 2026-10-10 → 2026-09-28 A (-12d) |  | 0% → 100% | 18d → none | A71680, A11160 → A71680 |
| A71700 | Install Manhole | 2026-09-29 → 2026-08-20 A (-40d) | 2026-10-10 → 2026-09-28 A (-12d) |  | 0% → 100% | 28d → none |  |
| A71710 | Testing & Inspection | 2026-10-11 → 2026-08-20 A (-52d) | 2026-10-21 → 2026-09-28 A (-23d) |  | 0% → 100% | 18d → none |  |
| A71720 | Backfilling & Compaction | 2026-10-22 → 2026-08-20 A (-63d) | 2026-11-02 → 2026-09-28 A (-35d) |  | 0% → 100% | 18d → none |  |
| MH-32-A-16-3 /MH-32-A-16-2 | **MH-32-A-16-3 /MH-32-A-16-2** | 2026-09-29 → 2026-08-20 (-40d) | 2026-11-14 → 2026-09-28 (-47d) |  |  |  |  |
| A71630 | Excavation | 2026-09-29 → 2026-08-20 A (-40d) | 2026-10-10 → 2026-09-28 A (-12d) |  | 0% → 100% | 18d → none |  |
| A71640 | Pipe Laying | 2026-10-11 → 2026-08-20 A (-52d) | 2026-10-21 → 2026-09-28 A (-23d) |  | 0% → 100% | 18d → none | A71630, A11160 → A71630 |
| A71650 | Install Manhole | 2026-10-11 → 2026-08-20 A (-52d) | 2026-10-21 → 2026-09-28 A (-23d) |  | 0% → 100% | 28d → none |  |
| A71660 | Testing & Inspection | 2026-10-22 → 2026-08-20 A (-63d) | 2026-11-02 → 2026-09-28 A (-35d) |  | 0% → 100% | 18d → none |  |
| A71670 | Backfilling & Compaction | 2026-11-03 → 2026-08-20 A (-75d) | 2026-11-14 → 2026-09-28 A (-47d) |  | 0% → 100% | 18d → none |  |
| MH-32-A-16-4 /MH-32-A-16-3 | **MH-32-A-16-4 /MH-32-A-16-3** | 2026-10-11 → 2026-08-20 (-52d) | 2026-11-25 → 2026-09-28 (-58d) |  |  |  |  |

| ID | Task | Start | Finish | Complete | Total float | Predecessors |
| --- | --- | --- | --- | --- | --- | --- |
| A71580 | Excavation | 2026-10-11 → 2026-08-20 A (-52d) | 2026-10-21 → 2026-09-28 A (-23d) | 0% → 100% | 18d → none |  |
| A71590 | Pipe Laying | 2026-10-22 → 2026-08-20 A (-63d) | 2026-11-02 → 2026-09-28 A (-35d) | 0% → 100% | 18d → none | A71580, A11160 → A71580 |
| A71600 | Install Manhole | 2026-10-22 → 2026-08-20 A (-63d) | 2026-11-02 → 2026-09-28 A (-35d) | 0% → 100% | 28d → none |  |
| A71610 | Testing & Inspection | 2026-11-03 → 2026-08-20 A (-75d) | 2026-11-14 → 2026-09-28 A (-47d) | 0% → 100% | 18d → none |  |
| A71620 | Backfilling & Compaction | 2026-11-15 → 2026-08-20 A (-87d) | 2026-11-25 → 2026-09-28 A (-58d) | 0% → 100% | 18d → none |  |
| MH-32-A-16-5 /MH-32-A-16-4 | **MH-32-A-16-5 /MH-32-A-16-4** | 2026-10-22 → 2026-08-20 (-63d) | 2026-12-07 → 2027-01-13 (+37d) |  |  |  |
| A71530 | Excavation | 2026-10-22 → 2026-08-20 A (-63d) | 2026-11-02 → 2026-09-28 A (-35d) | 0% → 100% | 18d → none |  |
| A71540 | Pipe Laying | 2026-11-03 → 2026-08-20 A (-75d) | 2026-11-14 → 2026-09-28 A (-47d) | 0% → 100% | 18d → none | A71530, A11160 → A71530 |
| A71550 | Install Manhole | 2026-11-03 → 2026-08-20 A (-75d) | 2026-11-14 → 2026-09-28 A (-47d) | 0% → 100% | 28d → none |  |
| A71570 | Backfilling & Compaction | 2026-11-26 → 2026-08-20 A (-98d) | 2026-12-07 → 2026-09-28 A (-70d) | 0% → 100% | 18d → none |  |
| A71560 | Testing & Inspection | 2026-11-15 → 2027-01-02 (+48d) | 2026-11-25 → 2027-01-13 (+49d) |  | 18d → 13.98d |  |
| MH-32-A-16-6 /MH-32-A-16-5 | **MH-32-A-16-6 /MH-32-A-16-5** | 2026-11-03 → 2026-08-20 (-75d) | 2026-12-19 → 2027-01-13 (+25d) |  |  |  |
| A71480 | Excavation | 2026-11-03 → 2026-08-20 A (-75d) | 2026-11-14 → 2026-09-28 A (-47d) | 0% → 100% | 18d → none |  |
| A71490 | Pipe Laying | 2026-11-15 → 2026-08-20 A (-87d) | 2026-11-25 → 2026-09-28 A (-58d) | 0% → 100% | 18d → none | A71480, A11160 → A71480 |
| A71500 | Install Manhole | 2026-11-15 → 2026-08-20 A (-87d) | 2026-11-25 → 2026-09-28 A (-58d) | 0% → 100% | 28d → none |  |
| A71520 | Backfilling & Compaction | 2026-12-08 → 2026-08-20 A (-110d) | 2026-12-19 → 2026-09-28 A (-82d) | 0% → 100% | 18d → none |  |
| A71510 | Testing & Inspection | 2026-11-26 → 2027-01-02 (+37d) | 2026-12-07 → 2027-01-13 (+37d) |  | 18d → 13.98d |  |
| MH-32-A-16-7 /MH-32-A-16-6 | **MH-32-A-16-7 /MH-32-A-16-6** | 2026-11-15 → 2026-08-20 (-87d) | 2026-12-30 → 2027-01-13 (+14d) |  |  |  |
| A71430 | Excavation | 2026-11-15 → 2026-08-20 A (-87d) | 2026-11-25 → 2026-09-28 A (-58d) | 0% → 100% | 18d → none |  |
| A71440 | Pipe Laying | 2026-11-26 → 2026-08-20 A (-98d) | 2026-12-07 → 2026-09-28 A (-70d) | 0% → 100% | 18d → none | A71430, A11160 → A71430 |
| A71450 | Install Manhole | 2026-11-26 → 2026-08-20 A (-98d) | 2026-12-07 → 2026-09-28 A (-70d) | 0% → 100% | 28d → none |  |
| A71470 | Backfilling & Compaction | 2026-12-20 → 2026-08-20 A (-122d) | 2026-12-30 → 2026-09-28 A (-93d) | 0% → 100% | 18d → none |  |
| A71460 | Testing & Inspection | 2026-12-08 → 2027-01-02 (+25d) | 2026-12-19 → 2027-01-13 (+25d) |  | 18d → 13.98d |  |
| LR 05 | **LR 05** | 2026-03-31 → 2026-08-20 (+142d) | 2027-01-16 → 2027-03-08 (+51d) |  |  |  |
| MH-36-A-13 /MH-36-A-15=2 | **MH-36-A-13 /MH-36-A-15=2** | 2026-11-12 → 2026-08-20 (-84d) | 2027-01-16 → 2027-03-08 (+51d) |  |  |  |
| A71180 | Excavation | 2026-11-12 → 2026-08-20 A (-84d) | 2026-11-28 → 2026-09-28 A (-61d) | 0% → 100% | 4d → none |  |
| A71190 | Pipe Laying | 2026-11-29 → 2026-08-20 A (-101d) | 2026-12-14 → 2026-09-28 A (-77d) | 0% → 100% | 4d → none | A71180, A11160 → A71180 |
| A71200 | Install Manhole | 2026-11-29 → 2026-08-20 A (-101d) | 2026-12-14 → 2026-09-28 A (-77d) | 0% → 100% | 18d → none |  |
| A71210 | Testing & Inspection | 2026-12-15 → 2027-01-02 (+18d) | 2026-12-30 → 2027-01-18 (+19d) |  | 4d → -4.02d |  |
| A71220 | Backfilling & Compaction | 2026-12-31 → 2027-02-20 (+51d) | 2027-01-16 → 2027-03-08 (+51d) |  | 4d → -32.02d |  |
| MH-36-A-14 /MH-36-A-13 | **MH-36-A-14 /MH-36-A-13** | 2026-10-27 → 2026-08-20 (-68d) | 2026-12-30 → 2026-09-28 (-93d) |  |  |  |
| A71230 | Excavation | 2026-10-27 → 2026-08-20 A (-68d) | 2026-11-11 → 2026-09-28 A (-44d) | 0% → 100% | 4d → none |  |
| A71240 | Pipe Laying | 2026-11-12 → 2026-08-20 A (-84d) | 2026-11-28 → 2026-09-28 A (-61d) | 0% → 100% | 4d → none | A71230, A11160 → A71230 |
| A71250 | Install Manhole | 2026-11-12 → 2026-09-05 A (-68d) | 2026-11-28 → 2026-09-28 A (-61d) | 0% → 100% | 18d → none |  |
| A71260 | Testing & Inspection | 2026-11-29 → 2026-09-05 A (-85d) | 2026-12-14 → 2026-09-28 A (-77d) | 0% → 100% | 4d → none |  |
| A71270 | Backfilling & Compaction | 2026-12-15 → 2026-09-05 A (-101d) | 2026-12-30 → 2026-09-28 A (-93d) | 0% → 100% | 4d → none |  |
| MH-36-A-15 /MH-36-A-14 | **MH-36-A-15 /MH-36-A-14** | 2026-10-11 → 2026-08-20 (-52d) | 2026-12-14 → 2027-02-20 (+68d) |  |  |  |
| A71280 | Excavation | 2026-10-11 → 2026-08-20 A (-52d) | 2026-10-26 → 2026-09-28 A (-28d) | 0% → 100% | 4d → none |  |
| A71290 | Pipe Laying | 2026-10-27 → 2026-08-20 A (-68d) | 2026-11-11 → 2026-09-28 A (-44d) | 0% → 100% | 4d → none | A71280, A11160 → A71280 |
| A71300 | Install Manhole | 2026-10-27 → 2026-08-20 A (-68d) | 2026-11-11 → 2026-09-28 A (-44d) | 0% → 100% | 18d → none |  |
| A71310 | Testing & Inspection | 2026-11-12 → 2027-01-02 (+51d) | 2026-11-28 → 2027-01-18 (+51d) |  | 4d → -18.02d |  |
| A71320 | Backfilling & Compaction | 2026-11-29 → 2027-02-03 (+66d) | 2026-12-14 → 2027-02-20 (+68d) |  | 4d → -32.02d |  |
| MH-36-A-16 /MH-36-A-15 | **MH-36-A-16 /MH-36-A-15** | 2026-09-24 → 2026-08-20 (-35d) | 2026-11-28 → 2027-02-03 (+67d) |  |  |  |
| A71330 | Excavation | 2026-09-24 → 2026-08-20 A (-35d) | 2026-10-10 → 2026-09-28 A (-12d) | 0% → 100% | 4d → none |  |
| A71340 | Pipe Laying | 2026-10-11 → 2026-08-20 A (-52d) | 2026-10-26 → 2026-09-28 A (-28d) | 0% → 100% | 4d → none | A71330, A11160 → A71330 |
| A71350 | Install Manhole | 2026-10-11 → 2026-08-20 A (-52d) | 2026-10-26 → 2026-09-28 A (-28d) | 0% → 100% | 18d → none |  |
| A71360 | Testing & Inspection | 2026-10-27 → 2027-01-02 (+67d) | 2026-11-11 → 2027-01-18 (+68d) |  | 4d → -32.02d |  |
| A71370 | Backfilling & Compaction | 2026-11-12 → 2027-01-18 (+67d) | 2026-11-28 → 2027-02-03 (+67d) |  | 4d → -32.02d |  |
| MH-36-A-17 /MH-36-A-16 | **MH-36-A-17 /MH-36-A-16** | 2026-03-31 → 2026-08-20 (+142d) | 2026-05-09 → 2026-10-26 (+170d) |  |  |  |
| A71380 | Excavation | 2026-03-31 → 2026-08-20 A (+142d) | 2026-04-04 → 2026-09-28 A (+177d) | 0% → 100% | 89d → none |  |
| A71390 | Pipe Laying | 2026-04-05 → 2026-08-20 A (+137d) | 2026-04-15 → 2026-09-28 A (+166d) | 0% → 100% | 89d → none | A71380, A11160 → A71380 |
| A71400 | Install Manhole | 2026-04-05 → 2026-08-20 A (+137d) | 2026-04-15 → 2026-09-28 A (+166d) | 0% → 100% | 99d → none |  |
| A71410 | Testing & Inspection | 2026-04-16 → 2026-10-03 (+170d) | 2026-04-27 → 2026-10-14 (+170d) |  | 89d → -84.1d |  |
| A71420 | Backfilling & Compaction | 2026-04-28 → 2026-10-14 (+169d) | 2026-05-09 → 2026-10-26 (+170d) |  | 89d → -84.1d |  |
| LR 06 | **LR 06** | 2026-04-16 → 2026-08-20 (+126d) | 2026-12-26 → 2027-02-06 (+42d) |  |  |  |
| MH-26-10-1 /MH-26-10 | **MH-26-10-1 /MH-26-10** | 2026-04-16 → 2026-09-20 (+157d) | 2026-06-01 → 2026-10-26 (+147d) |  |  |  |
| A71130 | Excavation | 2026-04-16 → 2026-09-20 A (+157d) | 2026-04-27 → 2026-09-29 A (+155d) | 0% → 100% | 2d → none |  |
| A71140 | Pipe Laying | 2026-04-28 → 2026-09-20 A (+145d) | 2026-05-09 → 2026-09-29 A (+143d) | 0% → 100% | 2d → none | A71130, A11160 → A71130 |
| A71150 | Install Manhole | 2026-04-28 → 2026-10-03 (+158d) | 2026-05-09 → 2026-10-14 (+158d) |  | 12d → -93.3d |  |
| A71160 | Testing & Inspection | 2026-05-10 → 2026-10-03 (+146d) | 2026-05-20 → 2026-10-14 (+147d) |  | 2d → -93.3d |  |
| A71170 | Backfilling & Compaction | 2026-05-21 → 2026-10-14 (+146d) | 2026-06-01 → 2026-10-26 (+147d) |  | 2d → -93.3d |  |
| MH-55-A-1 /MH-55-A | **MH-55-A-1 /MH-55-A** | 2026-11-10 → 2026-08-20 (-82d) | 2026-12-26 → 2027-01-13 (+18d) |  |  |  |
| A70880 | Excavation | 2026-11-10 → 2026-08-20 A (-82d) | 2026-11-21 → 2026-09-28 A (-54d) | 0% → 100% | 22d → none |  |
| A70890 | Pipe Laying | 2026-11-22 → 2026-08-20 A (-94d) | 2026-12-02 → 2026-09-28 A (-65d) | 0% → 100% | 22d → none |  |
| A70900 | Install Manhole | 2026-11-22 → 2026-08-20 A (-94d) | 2026-12-02 → 2026-09-28 A (-65d) | 0% → 100% | 32d → none |  |
| A70920 | Backfilling & Compaction | 2026-12-15 → 2026-08-20 A (-117d) | 2026-12-26 → 2026-09-28 A (-89d) | 0% → 100% | 22d → none |  |
| A70910 | Testing & Inspection | 2026-12-03 → 2027-01-02 (+30d) | 2026-12-14 → 2027-01-13 (+30d) |  | 22d → 13.98d |  |
| MH-55-A-2 /MH-55-A-1 | **MH-55-A-2 /MH-55-A-1** | 2026-10-29 → 2026-08-20 (-70d) | 2026-12-14 → 2027-01-13 (+30d) |  |  |  |
| A70930 | Excavation | 2026-10-29 → 2026-08-20 A (-70d) | 2026-11-09 → 2026-09-28 A (-42d) | 0% → 100% | 22d → none |  |
| A70940 | Pipe Laying | 2026-11-10 → 2026-08-20 A (-82d) | 2026-11-21 → 2026-09-28 A (-54d) | 0% → 100% | 22d → none |  |

| ID | Task | Start | Finish | Complete | Total float | Predecessors |
| --- | --- | --- | --- | --- | --- | --- |
| A70950 | Install Manhole | 2026-11-10 → 2026-08-20 A (-82d) | 2026-11-21 → 2026-09-28 A (-54d) | 0% → 100% | 32d → none |  |
| A70970 | Backfilling & Compaction | 2026-12-03 → 2026-08-20 A (-105d) | 2026-12-14 → 2026-09-28 A (-77d) | 0% → 100% | 22d → none |  |
| A70960 | Testing & Inspection | 2026-11-22 → 2027-01-02 (+41d) | 2026-12-02 → 2027-01-13 (+42d) |  | 22d → 13.98d |  |
| MH-55-A-3 /MH-55-A-2 | **MH-55-A-3 /MH-55-A-2** | 2026-10-18 → 2026-08-20 (-59d) | 2026-12-02 → 2027-01-13 (+42d) |  |  |  |
| A70980 | Excavation | 2026-10-18 → 2026-08-20 A (-59d) | 2026-10-28 → 2026-09-28 A (-30d) | 0% → 100% | 22d → none |  |
| A70990 | Pipe Laying | 2026-10-29 → 2026-08-20 A (-70d) | 2026-11-09 → 2026-09-28 A (-42d) | 0% → 100% | 22d → none | A70980, A11160 → A70980 |
| A71000 | Install Manhole | 2026-10-29 → 2026-08-20 A (-70d) | 2026-11-09 → 2026-09-28 A (-42d) | 0% → 100% | 32d → none |  |
| A71020 | Backfilling & Compaction | 2026-11-22 → 2026-08-20 A (-94d) | 2026-12-02 → 2026-09-28 A (-65d) | 0% → 100% | 22d → none |  |
| A71010 | Testing & Inspection | 2026-11-10 → 2027-01-02 (+53d) | 2026-11-21 → 2027-01-13 (+53d) |  | 22d → 13.98d |  |
| MH-55-A-4 /MH-55-A-3 | **MH-55-A-4 /MH-55-A-3** | 2026-10-06 → 2026-08-20 (-47d) | 2026-11-21 → 2027-02-06 (+77d) |  |  |  |
| A71030 | Excavation | 2026-10-06 → 2026-08-20 A (-47d) | 2026-10-17 → 2026-09-28 A (-19d) | 0% → 100% | 22d → none |  |
| A71040 | Pipe Laying | 2026-10-18 → 2026-08-20 A (-59d) | 2026-10-28 → 2026-09-28 A (-30d) | 0% → 100% | 22d → none | A71030, A11160 → A71030 |
| A71050 | Install Manhole | 2026-10-18 → 2026-08-20 A (-59d) | 2026-10-28 → 2026-09-28 A (-30d) | 0% → 100% | 32d → none |  |
| A71060 | Testing & Inspection | 2026-10-29 → 2027-01-02 (+65d) | 2026-11-09 → 2027-01-13 (+65d) |  | 22d → 3.98d |  |
| A71070 | Backfilling & Compaction | 2026-11-10 → 2027-01-25 (+76d) | 2026-11-21 → 2027-02-06 (+77d) |  | 22d → -6.02d |  |
| MH-55-A-5 /MH-55-A-4 | **MH-55-A-5 /MH-55-A-4** | 2026-09-24 → 2026-08-20 (-35d) | 2026-11-09 → 2027-01-25 (+77d) |  |  |  |
| A71080 | Excavation | 2026-09-24 → 2026-08-20 A (-35d) | 2026-10-05 → 2026-09-28 A (-7d) | 0% → 100% | 22d → none |  |
| A71090 | Pipe Laying | 2026-10-06 → 2026-08-20 A (-47d) | 2026-10-17 → 2026-09-28 A (-19d) | 0% → 100% | 22d → none | A71080, A11160 → A71080 |
| A71100 | Install Manhole | 2026-10-06 → 2026-08-20 A (-47d) | 2026-10-17 → 2026-09-28 A (-19d) | 0% → 100% | 32d → none |  |
| A71110 | Testing & Inspection | 2026-10-18 → 2027-01-02 (+76d) | 2026-10-28 → 2027-01-13 (+77d) |  | 22d → -6.02d |  |
| A71120 | Backfilling & Compaction | 2026-10-29 → 2027-01-13 (+76d) | 2026-11-09 → 2027-01-25 (+77d) |  | 22d → -6.02d |  |
| LR 07 | **LR 07** | 2026-04-22 → 2026-08-20 (+120d) | 2027-01-06 → 2026-09-28 (-100d) |  |  |  |
| MH-36-A-8-1 /MH-36-A-8 | **MH-36-A-8-1 /MH-36-A-8** | 2026-10-29 → 2026-08-20 (-70d) | 2026-12-14 → 2026-09-28 (-77d) |  |  |  |
| A70580 | Excavation | 2026-10-29 → 2026-08-20 A (-70d) | 2026-11-09 → 2026-09-28 A (-42d) | 0% → 100% | 12d → none |  |
| A70590 | Pipe Laying | 2026-11-10 → 2026-08-20 A (-82d) | 2026-11-21 → 2026-09-28 A (-54d) | 0% → 100% | 12d → none |  |
| A70600 | Install Manhole | 2026-11-10 → 2026-08-20 A (-82d) | 2026-11-21 → 2026-09-28 A (-54d) | 0% → 100% | 22d → none |  |
| A70610 | Testing & Inspection | 2026-11-22 → 2026-08-20 A (-94d) | 2026-12-02 → 2026-09-28 A (-65d) | 0% → 100% | 12d → none |  |
| A70620 | Backfilling & Compaction | 2026-12-03 → 2026-08-20 A (-105d) | 2026-12-14 → 2026-09-28 A (-77d) | 0% → 100% | 12d → none |  |
| MH-36-A-8-2 /MH-36-A-8-1 | **MH-36-A-8-2 /MH-36-A-8-1** | 2026-10-18 → 2026-08-20 (-59d) | 2026-12-02 → 2026-09-28 (-65d) |  |  |  |
| A70630 | Excavation | 2026-10-18 → 2026-08-20 A (-59d) | 2026-10-28 → 2026-09-28 A (-30d) | 0% → 100% | 12d → none |  |
| A70640 | Pipe Laying | 2026-10-29 → 2026-08-20 A (-70d) | 2026-11-09 → 2026-09-28 A (-42d) | 0% → 100% | 12d → none |  |
| A70650 | Install Manhole | 2026-10-29 → 2026-08-20 A (-70d) | 2026-11-09 → 2026-09-28 A (-42d) | 0% → 100% | 22d → none |  |
| A70660 | Testing & Inspection | 2026-11-10 → 2026-08-20 A (-82d) | 2026-11-21 → 2026-09-28 A (-54d) | 0% → 100% | 12d → none |  |
| A70670 | Backfilling & Compaction | 2026-11-22 → 2026-08-20 A (-94d) | 2026-12-02 → 2026-09-28 A (-65d) | 0% → 100% | 12d → none |  |
| MH-36-A-8-3 /MH-36-A-8-2 | **MH-36-A-8-3 /MH-36-A-8-2** | 2026-10-06 → 2026-08-20 (-47d) | 2026-11-21 → 2026-09-28 (-54d) |  |  |  |
| A70830 | Excavation | 2026-10-06 → 2026-08-20 A (-47d) | 2026-10-17 → 2026-09-28 A (-19d) | 0% → 100% | 12d → none |  |
| A70840 | Pipe Laying | 2026-10-18 → 2026-08-20 A (-59d) | 2026-10-28 → 2026-09-28 A (-30d) | 0% → 100% | 12d → none |  |
| A70850 | Install Manhole | 2026-10-18 → 2026-08-20 A (-59d) | 2026-10-28 → 2026-09-28 A (-30d) | 0% → 100% | 22d → none |  |
| A70860 | Testing & Inspection | 2026-10-29 → 2026-08-20 A (-70d) | 2026-11-09 → 2026-09-28 A (-42d) | 0% → 100% | 12d → none |  |
| A70870 | Backfilling & Compaction | 2026-11-10 → 2026-08-20 A (-82d) | 2026-11-21 → 2026-09-28 A (-54d) | 0% → 100% | 12d → none |  |
| MH-36-A-8-4 /MH-36-A-8-3 | **MH-36-A-8-4 /MH-36-A-8-3** | 2026-09-24 → 2026-08-20 (-35d) | 2026-11-09 → 2026-09-28 (-42d) |  |  |  |
| A70730 | Excavation | 2026-09-24 → 2026-08-20 A (-35d) | 2026-10-05 → 2026-09-28 A (-7d) | 0% → 100% | 12d → none |  |
| A70740 | Pipe Laying | 2026-10-06 → 2026-08-20 A (-47d) | 2026-10-17 → 2026-09-28 A (-19d) | 0% → 100% | 12d → none |  |
| A70750 | Install Manhole | 2026-10-06 → 2026-08-20 A (-47d) | 2026-10-17 → 2026-09-28 A (-19d) | 0% → 100% | 22d → none |  |
| A70760 | Testing & Inspection | 2026-10-18 → 2026-08-20 A (-59d) | 2026-10-28 → 2026-09-28 A (-30d) | 0% → 100% | 12d → none |  |
| A70770 | Backfilling & Compaction | 2026-10-29 → 2026-08-20 A (-70d) | 2026-11-09 → 2026-09-28 A (-42d) | 0% → 100% | 12d → none |  |
| MH-36-A-8-5 /MH-36-A-8-4 | **MH-36-A-8-5 /MH-36-A-8-4** | 2026-04-22 → 2026-08-20 (+120d) | 2026-06-07 → 2026-09-28 (+113d) |  |  |  |
| A70780 | Excavation | 2026-04-22 → 2026-08-20 A (+120d) | 2026-05-03 → 2026-09-28 A (+148d) | 0% → 100% | 69d → none |  |
| A70790 | Pipe Laying | 2026-05-04 → 2026-08-20 A (+108d) | 2026-05-14 → 2026-09-28 A (+137d) | 0% → 100% | 69d → none |  |
| A70800 | Install Manhole | 2026-05-04 → 2026-08-20 A (+108d) | 2026-05-14 → 2026-09-28 A (+137d) | 0% → 100% | 79d → none |  |
| A70810 | Testing & Inspection | 2026-05-16 → 2026-08-20 A (+96d) | 2026-05-26 → 2026-09-28 A (+125d) | 0% → 100% | 69d → none |  |
| A70820 | Backfilling & Compaction | 2026-05-27 → 2026-08-20 A (+85d) | 2026-06-07 → 2026-09-28 A (+113d) | 0% → 100% | 69d → none |  |
| MH-53-A-1 /MH-53-A | **MH-53-A-1 /MH-53-A** | 2026-11-22 → 2026-08-20 (-94d) | 2027-01-06 → 2026-09-28 (-100d) |  |  |  |
| A70480 | Excavation | 2026-11-22 → 2026-08-20 A (-94d) | 2026-12-02 → 2026-09-28 A (-65d) | 0% → 100% | 12d → none |  |
| A70490 | Pipe Laying | 2026-12-03 → 2026-08-20 A (-105d) | 2026-12-14 → 2026-09-28 A (-77d) | 0% → 100% | 12d → none |  |
| A70500 | Install Manhole | 2026-12-03 → 2026-08-20 A (-105d) | 2026-12-14 → 2026-09-28 A (-77d) | 0% → 100% | 22d → none |  |
| A70510 | Testing & Inspection | 2026-12-15 → 2026-08-20 A (-117d) | 2026-12-26 → 2026-09-28 A (-89d) | 0% → 100% | 12d → none |  |
| A70520 | Backfilling & Compaction | 2026-12-27 → 2026-08-20 A (-129d) | 2027-01-06 → 2026-09-28 A (-100d) | 0% → 100% | 12d → none |  |
| MH-53-A-2 /MH-53-A-1 | **MH-53-A-2 /MH-53-A-1** | 2026-11-10 → 2026-08-20 (-82d) | 2026-12-26 → 2026-09-28 (-89d) |  |  |  |
| A70530 | Excavation | 2026-11-10 → 2026-08-20 A (-82d) | 2026-11-21 → 2026-09-28 A (-54d) | 0% → 100% | 12d → none |  |
| A70540 | Pipe Laying | 2026-11-22 → 2026-08-20 A (-94d) | 2026-12-02 → 2026-09-28 A (-65d) | 0% → 100% | 12d → none |  |
| A70550 | Install Manhole | 2026-11-22 → 2026-08-20 A (-94d) | 2026-12-02 → 2026-09-28 A (-65d) | 0% → 100% | 22d → none |  |
| A70560 | Testing & Inspection | 2026-12-03 → 2026-08-20 A (-105d) | 2026-12-14 → 2026-09-28 A (-77d) | 0% → 100% | 12d → none |  |
| A70570 | Backfilling & Compaction | 2026-12-15 → 2026-08-20 A (-117d) | 2026-12-26 → 2026-09-28 A (-89d) | 0% → 100% | 12d → none |  |
| LR 08 | **LR 08** | 2026-05-11 → 2026-08-20 (+101d) | 2027-01-06 → 2026-09-28 (-100d) |  |  |  |
| MH-36-A-6-1 /MH-36-A-6 | **MH-36-A-6-1 /MH-36-A-6** | 2026-05-11 → 2026-08-20 (+101d) | 2026-06-25 → 2026-09-28 (+95d) |  |  |  |
| A70430 | Excavation | 2026-05-11 → 2026-08-20 A (+101d) | 2026-05-21 → 2026-09-28 A (+130d) | 0% → 100% | 40d → none |  |
| A70440 | Pipe Laying | 2026-05-23 → 2026-08-20 A (+89d) | 2026-06-02 → 2026-09-28 A (+118d) | 0% → 100% | 40d → none |  |
| A70450 | Install Manhole | 2026-05-23 → 2026-08-20 A (+89d) | 2026-06-02 → 2026-09-28 A (+118d) | 0% → 100% | 50d → none |  |
| A70460 | Testing & Inspection | 2026-06-03 → 2026-08-20 A (+78d) | 2026-06-14 → 2026-09-28 A (+106d) | 0% → 100% | 40d → none |  |

| ID | Task | Start | Finish | Complete | Total float |
| --- | --- | --- | --- | --- | --- |
| A70470 | Backfilling & Compaction | 2026-06-15 → 2026-08-20 A (+66d) | 2026-06-25 → 2026-09-28 A (+95d) | 0% → 100% | 40d → none |
| MH-36-A-6-2 /MH-36-A-6-1 | **MH-36-A-6-2 /MH-36-A-6-1** | 2026-09-24 → 2026-08-20 (-35d) | 2026-11-09 → 2026-09-28 (-42d) |  |  |
| A70380 | Excavation | 2026-09-24 → 2026-08-20 A (-35d) | 2026-10-05 → 2026-09-28 A (-7d) | 0% → 100% | 12d → none |
| A70390 | Pipe Laying | 2026-10-06 → 2026-08-20 A (-47d) | 2026-10-17 → 2026-09-28 A (-19d) | 0% → 100% | 12d → none |
| A70400 | Install Manhole | 2026-10-06 → 2026-08-20 A (-47d) | 2026-10-17 → 2026-09-28 A (-19d) | 0% → 100% | 22d → none |
| A70410 | Testing & Inspection | 2026-10-18 → 2026-08-20 A (-59d) | 2026-10-28 → 2026-09-28 A (-30d) | 0% → 100% | 12d → none |
| A70420 | Backfilling & Compaction | 2026-10-29 → 2026-08-20 A (-70d) | 2026-11-09 → 2026-09-28 A (-42d) | 0% → 100% | 12d → none |
| MH-36-A-6-3 /MH-36-A-6-2 | **MH-36-A-6-3 /MH-36-A-6-2** | 2026-10-06 → 2026-08-20 (-47d) | 2026-11-21 → 2026-09-28 (-54d) |  |  |
| A70330 | Excavation | 2026-10-06 → 2026-08-20 A (-47d) | 2026-10-17 → 2026-09-28 A (-19d) | 0% → 100% | 12d → none |
| A70340 | Pipe Laying | 2026-10-18 → 2026-08-20 A (-59d) | 2026-10-28 → 2026-09-28 A (-30d) | 0% → 100% | 12d → none |
| A70350 | Install Manhole | 2026-10-18 → 2026-08-20 A (-59d) | 2026-10-28 → 2026-09-28 A (-30d) | 0% → 100% | 22d → none |
| A70360 | Testing & Inspection | 2026-10-29 → 2026-08-20 A (-70d) | 2026-11-09 → 2026-09-28 A (-42d) | 0% → 100% | 12d → none |
| A70370 | Backfilling & Compaction | 2026-11-10 → 2026-08-20 A (-82d) | 2026-11-21 → 2026-09-28 A (-54d) | 0% → 100% | 12d → none |
| MH-36-A-6-4 /MH-36-A-6-3 | **MH-36-A-6-4 /MH-36-A-6-3** | 2026-10-18 → 2026-08-20 (-59d) | 2026-12-02 → 2026-09-28 (-65d) |  |  |
| A70280 | Excavation | 2026-10-18 → 2026-08-20 A (-59d) | 2026-10-28 → 2026-09-28 A (-30d) | 0% → 100% | 12d → none |
| A70290 | Pipe Laying | 2026-10-29 → 2026-08-20 A (-70d) | 2026-11-09 → 2026-09-28 A (-42d) | 0% → 100% | 12d → none |
| A70300 | Install Manhole | 2026-10-29 → 2026-08-20 A (-70d) | 2026-11-09 → 2026-09-28 A (-42d) | 0% → 100% | 22d → none |
| A70310 | Testing & Inspection | 2026-11-10 → 2026-08-20 A (-82d) | 2026-11-21 → 2026-09-28 A (-54d) | 0% → 100% | 12d → none |
| A70320 | Backfilling & Compaction | 2026-11-22 → 2026-08-20 A (-94d) | 2026-12-02 → 2026-09-28 A (-65d) | 0% → 100% | 12d → none |
| MH-36-A-6-5 /MH-36-A-6-4 | **MH-36-A-6-5 /MH-36-A-6-4** | 2026-10-29 → 2026-08-20 (-70d) | 2026-12-14 → 2026-09-28 (-77d) |  |  |
| A70230 | Excavation | 2026-10-29 → 2026-08-20 A (-70d) | 2026-11-09 → 2026-09-28 A (-42d) | 0% → 100% | 12d → none |
| A70240 | Pipe Laying | 2026-11-10 → 2026-08-20 A (-82d) | 2026-11-21 → 2026-09-28 A (-54d) | 0% → 100% | 12d → none |
| A70250 | Install Manhole | 2026-11-10 → 2026-08-20 A (-82d) | 2026-11-21 → 2026-09-28 A (-54d) | 0% → 100% | 22d → none |
| A70260 | Testing & Inspection | 2026-11-22 → 2026-08-20 A (-94d) | 2026-12-02 → 2026-09-28 A (-65d) | 0% → 100% | 12d → none |
| A70270 | Backfilling & Compaction | 2026-12-03 → 2026-08-20 A (-105d) | 2026-12-14 → 2026-09-28 A (-77d) | 0% → 100% | 12d → none |
| MH-36-A-6-6 /MH-36-A-6-5 | **MH-36-A-6-6 /MH-36-A-6-5** | 2026-11-10 → 2026-08-20 (-82d) | 2026-12-26 → 2026-09-28 (-89d) |  |  |
| A70180 | Excavation | 2026-11-10 → 2026-08-20 A (-82d) | 2026-11-21 → 2026-09-28 A (-54d) | 0% → 100% | 12d → none |
| A70190 | Pipe Laying | 2026-11-22 → 2026-08-20 A (-94d) | 2026-12-02 → 2026-09-28 A (-65d) | 0% → 100% | 12d → none |
| A70200 | Install Manhole | 2026-11-22 → 2026-08-20 A (-94d) | 2026-12-02 → 2026-09-28 A (-65d) | 0% → 100% | 22d → none |
| A70210 | Testing & Inspection | 2026-12-03 → 2026-08-20 A (-105d) | 2026-12-14 → 2026-09-28 A (-77d) | 0% → 100% | 12d → none |
| A70220 | Backfilling & Compaction | 2026-12-15 → 2026-08-20 A (-117d) | 2026-12-26 → 2026-09-28 A (-89d) | 0% → 100% | 12d → none |
| MH-36-A-6-7 /MH-36-A-6-6 | **MH-36-A-6-7 /MH-36-A-6-6** | 2026-11-22 → 2026-08-20 (-94d) | 2027-01-06 → 2026-09-28 (-100d) |  |  |
| A70130 | Excavation | 2026-11-22 → 2026-08-20 A (-94d) | 2026-12-02 → 2026-09-28 A (-65d) | 0% → 100% | 12d → none |
| A70140 | Pipe Laying | 2026-12-03 → 2026-08-20 A (-105d) | 2026-12-14 → 2026-09-28 A (-77d) | 0% → 100% | 12d → none |
| A70150 | Install Manhole | 2026-12-03 → 2026-08-20 A (-105d) | 2026-12-14 → 2026-09-28 A (-77d) | 0% → 100% | 22d → none |
| A70160 | Testing & Inspection | 2026-12-15 → 2026-08-20 A (-117d) | 2026-12-26 → 2026-09-28 A (-89d) | 0% → 100% | 12d → none |
| A70170 | Backfilling & Compaction | 2026-12-27 → 2026-08-20 A (-129d) | 2027-01-06 → 2026-09-28 A (-100d) | 0% → 100% | 12d → none |
| LR 09 | **LR 09** | 2026-02-12 → 2026-08-20 (+189d) | 2026-11-25 → 2026-09-28 (-58d) |  |  |
| MH-36-A-3-1 /MH-36-A-3 | **MH-36-A-3-1 /MH-36-A-3** | 2026-02-12 → 2026-08-20 (+189d) | 2026-03-30 → 2026-09-28 (+182d) |  |  |
| A70080 | Excavation | 2026-02-12 → 2026-08-20 A (+189d) | 2026-02-23 → 2026-09-28 A (+217d) | 0% → 100% | 139d → none |
| A70090 | Pipe Laying | 2026-02-24 → 2026-08-20 A (+177d) | 2026-03-07 → 2026-09-28 A (+205d) | 0% → 100% | 139d → none |
| A70100 | Install Manhole | 2026-02-24 → 2026-08-20 A (+177d) | 2026-03-07 → 2026-09-28 A (+205d) | 0% → 100% | 149d → none |
| A70110 | Testing & Inspection | 2026-03-08 → 2026-08-20 A (+165d) | 2026-03-18 → 2026-09-28 A (+194d) | 0% → 100% | 139d → none |
| A70120 | Backfilling & Compaction | 2026-03-19 → 2026-08-20 A (+154d) | 2026-03-30 → 2026-09-28 A (+182d) | 0% → 100% | 139d → none |
| MH-36-A-3-2 /MH-36-A-3-1 | **MH-36-A-3-2 /MH-36-A-3-1** | 2026-09-24 → 2026-08-20 (-35d) | 2026-11-09 → 2026-09-28 (-42d) |  |  |
| A70030 | Excavation | 2026-09-24 → 2026-08-20 A (-35d) | 2026-10-05 → 2026-09-28 A (-7d) | 0% → 100% | 48d → none |
| A70040 | Pipe Laying | 2026-10-06 → 2026-08-20 A (-47d) | 2026-10-17 → 2026-09-28 A (-19d) | 0% → 100% | 48d → none |
| A70050 | Install Manhole | 2026-10-06 → 2026-08-20 A (-47d) | 2026-10-17 → 2026-09-28 A (-19d) | 0% → 100% | 58d → none |
| A70060 | Testing & Inspection | 2026-10-18 → 2026-08-20 A (-59d) | 2026-10-28 → 2026-09-28 A (-30d) | 0% → 100% | 48d → none |
| A70070 | Backfilling & Compaction | 2026-10-29 → 2026-08-20 A (-70d) | 2026-11-09 → 2026-09-28 A (-42d) | 0% → 100% | 48d → none |
| MH-36-A-3-3 /MH-36-A-3-2 | **MH-36-A-3-3 /MH-36-A-3-2** | 2026-10-06 → 2026-08-20 (-47d) | 2026-11-21 → 2026-09-28 (-54d) |  |  |
| A69980 | Excavation | 2026-10-06 → 2026-08-20 A (-47d) | 2026-10-17 → 2026-09-28 A (-19d) | 0% → 100% | 48d → none |
| A69990 | Pipe Laying | 2026-10-18 → 2026-08-20 A (-59d) | 2026-10-28 → 2026-09-28 A (-30d) | 0% → 100% | 48d → none |
| A70000 | Install Manhole | 2026-10-18 → 2026-08-20 A (-59d) | 2026-10-28 → 2026-09-28 A (-30d) | 0% → 100% | 58d → none |
| A70010 | Testing & Inspection | 2026-10-29 → 2026-08-20 A (-70d) | 2026-11-09 → 2026-09-28 A (-42d) | 0% → 100% | 48d → none |
| A70020 | Backfilling & Compaction | 2026-11-10 → 2026-08-20 A (-82d) | 2026-11-21 → 2026-09-28 A (-54d) | 0% → 100% | 48d → none |
| MH-36-A-3-4 /MH-36-A-3-3 | **MH-36-A-3-4 /MH-36-A-3-3** | 2026-10-18 → 2026-08-20 (-59d) | 2026-11-25 → 2026-09-28 (-58d) |  |  |
| A69930 | Excavation | 2026-10-18 → 2026-08-20 A (-59d) | 2026-10-28 → 2026-09-28 A (-30d) | 0% → 100% | 48d → none |
| A69940 | Pipe Laying | 2026-10-29 → 2026-08-20 A (-70d) | 2026-11-09 → 2026-09-28 A (-42d) | 0% → 100% | 48d → none |
| A69950 | Install Manhole | 2026-10-29 → 2026-08-20 A (-70d) | 2026-11-09 → 2026-09-28 A (-42d) | 0% → 100% | 58d → none |
| A69960 | Testing & Inspection | 2026-11-10 → 2026-08-20 A (-82d) | 2026-11-21 → 2026-09-28 A (-54d) | 0% → 100% | 48d → none |
| A69970 | Backfilling & Compaction | 2026-11-22 → 2026-08-20 A (-94d) | 2026-11-25 → 2026-09-28 A (-58d) | 0% → 100% | 48d → none |
| LR 010 | **LR 010** | 2026-09-24 → 2026-08-20 (-35d) | 2026-11-15 → 2026-09-28 (-48d) |  |  |
| MH-32-A-18-1 /MH-32-A-18 | **MH-32-A-18-1 /MH-32-A-18** | 2026-09-30 → 2026-08-20 (-41d) | 2026-11-15 → 2026-09-28 (-48d) |  |  |
| A69830 | Excavation | 2026-09-30 → 2026-08-20 A (-41d) | 2026-10-11 → 2026-09-28 A (-13d) | 0% → 100% | 57d → none |
| A69840 | Pipe Laying | 2026-10-12 → 2026-08-20 A (-53d) | 2026-10-22 → 2026-09-28 A (-24d) | 0% → 100% | 57d → none |
| A69850 | Install Manhole | 2026-10-12 → 2026-08-20 A (-53d) | 2026-10-22 → 2026-09-28 A (-24d) | 0% → 100% | 67d → none |
| A69860 | Testing & Inspection | 2026-10-24 → 2026-08-20 A (-65d) | 2026-11-03 → 2026-09-28 A (-36d) | 0% → 100% | 57d → none |
| A69870 | Backfilling & Compaction | 2026-11-04 → 2026-08-20 A (-76d) | 2026-11-15 → 2026-09-28 A (-48d) | 0% → 100% | 57d → none |
| MH-32-A-18-2 /MH-32-A-18-1 | **MH-32-A-18-2 /MH-32-A-18-1** | 2026-09-24 → 2026-08-20 (-35d) | 2026-10-17 → 2026-09-28 (-19d) |  |  |

| ID | Task | Start | Finish | Complete | Total float |
| --- | --- | --- | --- | --- | --- |
| A69880 | Excavation | 2026-09-24 → 2026-08-20 A (-35d) | 2026-09-29 → 2026-09-28 A (-1d) | 0% → 100% | 2d → none |
| A69890 | Pipe Laying | 2026-09-30 → 2026-08-20 A (-41d) | 2026-10-05 → 2026-09-28 A (-7d) | 0% → 100% | 2d → none |
| A69900 | Install Manhole | 2026-09-30 → 2026-08-20 A (-41d) | 2026-10-05 → 2026-09-28 A (-7d) | 0% → 100% | 7d → none |
| A69910 | Testing & Inspection | 2026-10-06 → 2026-08-20 A (-47d) | 2026-10-11 → 2026-09-28 A (-13d) | 0% → 100% | 2d → none |
| A69920 | Backfilling & Compaction | 2026-10-12 → 2026-08-20 A (-53d) | 2026-10-17 → 2026-09-28 A (-19d) | 0% → 100% | 2d → none |
| LR 011 | **LR 011** | 2026-03-17 → 2026-08-20 (+156d) | 2026-11-14 → 2026-09-28 (-47d) |  |  |
| MH-32-A-16-3-1 /MH-32-A-16-3 | **MH-32-A-16-3-1 /MH-32-A-16-3** | 2026-10-06 → 2026-08-20 (-47d) | 2026-11-14 → 2026-09-28 (-47d) |  |  |
| A69680 | Excavation | 2026-10-06 → 2026-08-20 A (-47d) | 2026-10-17 → 2026-09-28 A (-19d) | 0% → 100% | 10d → none |
| A69690 | Pipe Laying | 2026-10-18 → 2026-08-20 A (-59d) | 2026-10-28 → 2026-09-28 A (-30d) | 0% → 100% | 60d → none |
| A69700 | Install Manhole | 2026-10-18 → 2026-08-20 A (-59d) | 2026-10-28 → 2026-09-28 A (-30d) | 0% → 100% | 62d → none |
| A69710 | Testing & Inspection | 2026-10-29 → 2026-08-20 A (-70d) | 2026-10-31 → 2026-09-28 A (-33d) | 0% → 100% | 60d → none |
| A69720 | Backfilling & Compaction | 2026-11-03 → 2026-08-20 A (-75d) | 2026-11-14 → 2026-09-28 A (-47d) | 0% → 100% | 58d → none |
| MH-32-A-16-3-2 /MH-32-A-16-3-1 | **MH-32-A-16-3-2 /MH-32-A-16-3-1** | 2026-09-24 → 2026-08-20 (-35d) | 2026-11-02 → 2026-09-28 (-35d) |  |  |
| A69730 | Excavation | 2026-09-24 → 2026-08-20 A (-35d) | 2026-10-05 → 2026-09-28 A (-7d) | 0% → 100% | 10d → none |
| A69740 | Pipe Laying | 2026-10-06 → 2026-08-20 A (-47d) | 2026-10-17 → 2026-09-28 A (-19d) | 0% → 100% | 58d → none |
| A69750 | Install Manhole | 2026-10-06 → 2026-08-20 A (-47d) | 2026-10-17 → 2026-09-28 A (-19d) | 0% → 100% | 68d → none |
| A69760 | Testing & Inspection | 2026-10-18 → 2026-08-20 A (-59d) | 2026-10-28 → 2026-09-28 A (-30d) | 0% → 100% | 58d → none |
| A69770 | Backfilling & Compaction | 2026-10-29 → 2026-08-20 A (-70d) | 2026-11-02 → 2026-09-28 A (-35d) | 0% → 100% | 58d → none |
| MH-32-A-16-3-3 /MH-32-A-16-3-2 | **MH-32-A-16-3-3 /MH-32-A-16-3-2** | 2026-03-17 → 2026-08-20 (+156d) | 2026-05-02 → 2026-09-28 (+149d) |  |  |
| A69780 | Excavation | 2026-03-17 → 2026-08-20 A (+156d) | 2026-03-28 → 2026-09-28 A (+184d) | 0% → 100% | 164d → none |
| A69790 | Pipe Laying | 2026-03-29 → 2026-08-20 A (+144d) | 2026-04-08 → 2026-09-28 A (+173d) | 0% → 100% | 185d → none |
| A69800 | Install Manhole | 2026-03-29 → 2026-08-20 A (+144d) | 2026-04-08 → 2026-09-28 A (+173d) | 0% → 100% | 195d → none |
| A69810 | Testing & Inspection | 2026-04-09 → 2026-08-20 A (+133d) | 2026-04-20 → 2026-09-28 A (+161d) | 0% → 100% | 185d → none |
| A69820 | Backfilling & Compaction | 2026-04-21 → 2026-08-20 A (+121d) | 2026-05-02 → 2026-09-28 A (+149d) | 0% → 100% | 185d → none |
| LR 012 | **LR 012** | 2026-10-18 → 2026-08-20 (-59d) | 2026-12-10 → 2027-01-13 (+34d) |  |  |
| MH-32-A-16-5-1 /MH-32-A-16-5 | **MH-32-A-16-5-1 /MH-32-A-16-5** | 2026-11-02 → 2026-08-20 (-74d) | 2026-12-10 → 2027-01-13 (+34d) |  |  |
| A69530 | Excavation | 2026-11-02 → 2026-08-20 A (-74d) | 2026-11-12 → 2026-09-28 A (-45d) | 0% → 100% | 35d → none |
| A69540 | Pipe Laying | 2026-11-14 → 2026-08-20 A (-86d) | 2026-11-17 → 2026-09-28 A (-50d) | 0% → 100% | 35d → none |
| A69550 | Install Manhole | 2026-11-14 → 2026-08-20 A (-86d) | 2026-11-17 → 2026-09-28 A (-50d) | 0% → 100% | 45d → none |
| A69570 | Backfilling & Compaction | 2026-11-30 → 2026-08-20 A (-102d) | 2026-12-10 → 2026-09-28 A (-73d) | 0% → 100% | 35d → none |
| A69560 | Testing & Inspection | 2026-11-18 → 2027-01-02 (+45d) | 2026-11-29 → 2027-01-13 (+45d) |  | 35d → 13.98d |
| MH-32-A-16-5-2 /MH-32-A-16-5-1 | **MH-32-A-16-5-2 /MH-32-A-16-5-1** | 2026-10-21 → 2026-08-20 (-62d) | 2026-11-26 → 2027-01-04 (+39d) |  |  |
| A69580 | Excavation | 2026-10-21 → 2026-08-20 A (-62d) | 2026-11-01 → 2026-09-28 A (-34d) | 0% → 100% | 35d → none |
| A69590 | Pipe Laying | 2026-11-02 → 2026-08-20 A (-74d) | 2026-11-12 → 2026-09-28 A (-45d) | 0% → 100% | 37d → none |
| A69600 | Install Manhole | 2026-11-02 → 2026-08-20 A (-74d) | 2026-11-12 → 2026-09-28 A (-45d) | 0% → 100% | 39d → none |
| A69620 | Backfilling & Compaction | 2026-11-16 → 2026-08-20 A (-88d) | 2026-11-26 → 2026-09-28 A (-59d) | 0% → 100% | 37d → none |
| A69610 | Testing & Inspection | 2026-11-14 → 2027-01-02 (+49d) | 2026-11-15 → 2027-01-04 (+50d) |  | 37d → 21.98d |
| MH-32-A-16-5-3 /MH-32-A-16-5-2 | **MH-32-A-16-5-3 /MH-32-A-16-5-2** | 2026-10-18 → 2026-08-20 (-59d) | 2026-10-31 → 2026-09-28 (-33d) |  |  |
| A69630 | Excavation | 2026-10-18 → 2026-08-20 A (-59d) | 2026-10-20 → 2026-09-28 A (-22d) | 0% → 100% | 10d → none |
| A69640 | Pipe Laying | 2026-10-21 → 2026-08-20 A (-62d) | 2026-10-24 → 2026-09-28 A (-26d) | 0% → 100% | 10d → none |
| A69650 | Install Manhole | 2026-10-21 → 2026-08-20 A (-62d) | 2026-10-24 → 2026-09-28 A (-26d) | 0% → 100% | 13d → none |
| A69660 | Testing & Inspection | 2026-10-25 → 2026-08-20 A (-66d) | 2026-10-27 → 2026-09-28 A (-29d) | 0% → 100% | 10d → none |
| A69670 | Backfilling & Compaction | 2026-10-28 → 2026-08-20 A (-69d) | 2026-10-31 → 2026-09-28 A (-33d) | 0% → 100% | 10d → none |
| LR 013 | **LR 013** | 2026-04-19 → 2026-08-20 (+123d) | 2026-11-14 → 2026-09-28 (-47d) |  |  |
| MH-36-A-3-2-1 /MH-36-A-3-2 | **MH-36-A-3-2-1 /MH-36-A-3-2** | 2026-10-06 → 2026-08-20 (-47d) | 2026-11-14 → 2026-09-28 (-47d) |  |  |
| A69380 | Excavation | 2026-10-06 → 2026-08-20 A (-47d) | 2026-10-10 → 2026-09-28 A (-12d) | 0% → 100% | 58d → none |
| A69390 | Pipe Laying | 2026-10-11 → 2026-08-20 A (-52d) | 2026-10-21 → 2026-09-28 A (-23d) | 0% → 100% | 58d → none |
| A69400 | Install Manhole | 2026-10-11 → 2026-08-20 A (-52d) | 2026-10-21 → 2026-09-28 A (-23d) | 0% → 100% | 68d → none |
| A69410 | Testing & Inspection | 2026-10-22 → 2026-08-20 A (-63d) | 2026-11-02 → 2026-09-28 A (-35d) | 0% → 100% | 58d → none |
| A69420 | Backfilling & Compaction | 2026-11-03 → 2026-08-20 A (-75d) | 2026-11-14 → 2026-09-28 A (-47d) | 0% → 100% | 58d → none |
| MH-36-A-3-2-2 /MH-36-A-3-2-1 | **MH-36-A-3-2-2 /MH-36-A-3-2-1** | 2026-09-24 → 2026-08-20 (-35d) | 2026-11-02 → 2026-09-28 (-35d) |  |  |
| A69430 | Excavation | 2026-09-24 → 2026-08-20 A (-35d) | 2026-10-05 → 2026-09-28 A (-7d) | 0% → 100% | 58d → none |
| A69440 | Pipe Laying | 2026-10-06 → 2026-08-20 A (-47d) | 2026-10-10 → 2026-09-28 A (-12d) | 0% → 100% | 58d → none |
| A69450 | Install Manhole | 2026-10-06 → 2026-08-20 A (-47d) | 2026-10-10 → 2026-09-28 A (-12d) | 0% → 100% | 68d → none |
| A69460 | Testing & Inspection | 2026-10-11 → 2026-08-20 A (-52d) | 2026-10-21 → 2026-09-28 A (-23d) | 0% → 100% | 58d → none |
| A69470 | Backfilling & Compaction | 2026-10-22 → 2026-08-20 A (-63d) | 2026-11-02 → 2026-09-28 A (-35d) | 0% → 100% | 58d → none |
| MH-36-A-3-2-3 /MH-36-A-3-2-2 | **MH-36-A-3-2-3 /MH-36-A-3-2-2** | 2026-04-19 → 2026-08-20 (+123d) | 2026-05-25 → 2026-09-28 (+126d) |  |  |
| A69480 | Excavation | 2026-04-19 → 2026-08-20 A (+123d) | 2026-04-29 → 2026-09-28 A (+152d) | 0% → 100% | 107d → none |
| A69490 | Pipe Laying | 2026-04-30 → 2026-08-20 A (+112d) | 2026-05-11 → 2026-09-28 A (+140d) | 0% → 100% | 107d → none |
| A69500 | Install Manhole | 2026-04-30 → 2026-08-20 A (+112d) | 2026-05-11 → 2026-09-28 A (+140d) | 0% → 100% | 109d → none |
| A69510 | Testing & Inspection | 2026-05-12 → 2026-08-20 A (+100d) | 2026-05-13 → 2026-09-28 A (+138d) | 0% → 100% | 107d → none |
| A69520 | Backfilling & Compaction | 2026-05-14 → 2026-08-20 A (+98d) | 2026-05-25 → 2026-09-28 A (+126d) | 0% → 100% | 107d → none |
| LR 014 | **LR 014** | 2026-05-05 → 2026-08-20 (+107d) | 2026-11-11 → 2026-09-28 (-44d) |  |  |
| MH-36-A-3-5 /MH-36-A-3-4 | **MH-36-A-3-5 /MH-36-A-3-4** | 2026-05-05 → 2026-08-20 (+107d) | 2026-06-13 → 2026-09-28 (+107d) |  |  |
| A69330 | Excavation | 2026-05-05 → 2026-08-20 A (+107d) | 2026-05-16 → 2026-09-28 A (+135d) | 0% → 100% | 103d → none |
| A69340 | Pipe Laying | 2026-05-17 → 2026-08-20 A (+95d) | 2026-05-20 → 2026-09-28 A (+131d) | 0% → 100% | 103d → none |
| A69350 | Install Manhole | 2026-05-17 → 2026-08-20 A (+95d) | 2026-05-20 → 2026-09-28 A (+131d) | 0% → 100% | 113d → none |
| A69360 | Testing & Inspection | 2026-05-21 → 2026-08-20 A (+91d) | 2026-06-01 → 2026-09-28 A (+119d) | 0% → 100% | 103d → none |
| A69370 | Backfilling & Compaction | 2026-06-02 → 2026-08-20 A (+79d) | 2026-06-13 → 2026-09-28 A (+107d) | 0% → 100% | 103d → none |
| MH-36-A-3-6 /MH-36-A-3-5 | **MH-36-A-3-6 /MH-36-A-3-5** | 2026-09-24 → 2026-08-20 (-35d) | 2026-11-02 → 2026-09-28 (-35d) |  |  |

| ID | Task | Start | Finish | Complete | Total float |
| --- | --- | --- | --- | --- | --- |
| A69280 | Excavation | 2026-09-24 → 2026-08-20 A (-35d) | 2026-09-28 A | 0% → 100% | 60d → none |
| A69290 | Pipe Laying | 2026-09-29 → 2026-08-20 A (-40d) | 2026-10-10 → 2026-09-28 A (-12d) | 0% → 100% | 60d → none |
| A69300 | Install Manhole | 2026-09-29 → 2026-08-20 A (-40d) | 2026-10-10 → 2026-09-28 A (-12d) | 0% → 100% | 70d → none |
| A69310 | Testing & Inspection | 2026-10-11 → 2026-08-20 A (-52d) | 2026-10-21 → 2026-09-28 A (-23d) | 0% → 100% | 60d → none |
| A69320 | Backfilling & Compaction | 2026-10-22 → 2026-08-20 A (-63d) | 2026-11-02 → 2026-09-28 A (-35d) | 0% → 100% | 60d → none |
| MH-36-A-3-6-1 /MH-36-A-3-6 | **MH-36-A-3-6-1 /MH-36-A-3-6** | 2026-10-11 → 2026-08-20 (-52d) | 2026-11-11 → 2026-09-28 (-44d) |  |  |
| A69180 | Excavation | 2026-10-11 → 2026-08-20 A (-52d) | 2026-10-21 → 2026-09-28 A (-23d) | 0% → 100% | 60d → none |
| A69190 | Pipe Laying | 2026-10-22 → 2026-08-20 A (-63d) | 2026-10-26 → 2026-09-28 A (-28d) | 0% → 100% | 60d → none |
| A69200 | Install Manhole | 2026-10-22 → 2026-08-20 A (-63d) | 2026-10-26 → 2026-09-28 A (-28d) | 0% → 100% | 70d → none |
| A69210 | Testing & Inspection | 2026-10-27 → 2026-08-20 A (-68d) | 2026-11-07 → 2026-09-28 A (-40d) | 0% → 100% | 60d → none |
| A69220 | Backfilling & Compaction | 2026-11-08 → 2026-08-20 A (-80d) | 2026-11-11 → 2026-09-28 A (-44d) | 0% → 100% | 60d → none |
| MH-36-A-3-6-2 /MH-36-A-3-6-1 | **MH-36-A-3-6-2 /MH-36-A-3-6-1** | 2026-09-29 → 2026-08-20 (-40d) | 2026-11-07 → 2026-09-28 (-40d) |  |  |
| A69230 | Excavation | 2026-09-29 → 2026-08-20 A (-40d) | 2026-10-10 → 2026-09-28 A (-12d) | 0% → 100% | 60d → none |
| A69240 | Pipe Laying | 2026-10-11 → 2026-08-20 A (-52d) | 2026-10-21 → 2026-09-28 A (-23d) | 0% → 100% | 60d → none |
| A69250 | Install Manhole | 2026-10-11 → 2026-08-20 A (-52d) | 2026-10-21 → 2026-09-28 A (-23d) | 0% → 100% | 70d → none |
| A69260 | Testing & Inspection | 2026-10-22 → 2026-08-20 A (-63d) | 2026-11-02 → 2026-09-28 A (-35d) | 0% → 100% | 60d → none |
| A69270 | Backfilling & Compaction | 2026-11-03 → 2026-08-20 A (-75d) | 2026-11-07 → 2026-09-28 A (-40d) | 0% → 100% | 60d → none |
| LR 015 | **LR 015** | 2026-09-24 → 2026-08-20 (-35d) | 2026-10-31 → 2026-09-28 (-33d) |  |  |
| MH-36-A-3-7 /MH-36-A-3-6 | **MH-36-A-3-7 /MH-36-A-3-6** | 2026-09-24 → 2026-08-20 (-35d) | 2026-10-19 → 2026-09-28 (-21d) |  |  |
| A69130 | Excavation | 2026-09-24 → 2026-08-20 A (-35d) | 2026-09-30 → 2026-09-28 A (-2d) | 0% → 100% | 1d → none |
| A69140 | Pipe Laying | 2026-10-01 → 2026-08-20 A (-42d) | 2026-10-05 → 2026-09-28 A (-7d) | 0% → 100% | 15d → none |
| A69150 | Install Manhole | 2026-10-01 → 2026-08-20 A (-42d) | 2026-10-05 → 2026-09-28 A (-7d) | 0% → 100% | 21d → none |
| A69160 | Testing & Inspection | 2026-10-06 → 2026-08-20 A (-47d) | 2026-10-12 → 2026-09-28 A (-14d) | 0% → 100% | 15d → none |
| A69170 | Backfilling & Compaction | 2026-10-13 → 2026-08-20 A (-54d) | 2026-10-19 → 2026-09-28 A (-21d) | 0% → 100% | 15d → none |
| MH-36-A-3-8 /MH-36-A-3-7 | **MH-36-A-3-8 /MH-36-A-3-7** | 2026-10-01 → 2026-08-20 (-42d) | 2026-10-26 → 2026-09-28 (-28d) |  |  |
| A69080 | Excavation | 2026-10-01 → 2026-08-20 A (-42d) | 2026-10-05 → 2026-09-28 A (-7d) | 0% → 100% | 1d → none |
| A69090 | Pipe Laying | 2026-10-06 → 2026-08-20 A (-47d) | 2026-10-12 → 2026-09-28 A (-14d) | 0% → 100% | 70d → none |
| A69100 | Install Manhole | 2026-10-06 → 2026-08-20 A (-47d) | 2026-10-12 → 2026-09-28 A (-14d) | 0% → 100% | 76d → none |
| A69110 | Testing & Inspection | 2026-10-13 → 2026-08-20 A (-54d) | 2026-10-19 → 2026-09-28 A (-21d) | 0% → 100% | 70d → none |
| A69120 | Backfilling & Compaction | 2026-10-20 → 2026-08-20 A (-61d) | 2026-10-26 → 2026-09-28 A (-28d) | 0% → 100% | 70d → none |
| MH-36-A-3-9 /MH-36-A-3-8 | **MH-36-A-3-9 /MH-36-A-3-8** | 2026-10-06 → 2026-08-20 (-47d) | 2026-10-31 → 2026-09-28 (-33d) |  |  |
| A69030 | Excavation | 2026-10-06 → 2026-08-20 A (-47d) | 2026-10-12 → 2026-09-28 A (-14d) | 0% → 100% | 1d → none |
| A69040 | Pipe Laying | 2026-10-13 → 2026-08-20 A (-54d) | 2026-10-19 → 2026-09-28 A (-21d) | 0% → 100% | 70d → none |
| A69050 | Install Manhole | 2026-10-13 → 2026-08-20 A (-54d) | 2026-10-19 → 2026-09-28 A (-21d) | 0% → 100% | 76d → none |
| A69060 | Testing & Inspection | 2026-10-20 → 2026-08-20 A (-61d) | 2026-10-26 → 2026-09-28 A (-28d) | 0% → 100% | 70d → none |
| A69070 | Backfilling & Compaction | 2026-10-27 → 2026-08-20 A (-68d) | 2026-10-31 → 2026-09-28 A (-33d) | 0% → 100% | 70d → none |
| EX LR 02 | **EX LR 02** | 2026-10-13 → 2027-01-02 (+81d) | 2026-11-08 → 2027-01-28 (+81d) |  |  |
| MH-32-A-12-9 /MH-32-A-12-8 | **MH-32-A-12-9 /MH-32-A-12-8** | 2026-10-13 → 2027-01-02 (+81d) | 2026-11-08 → 2027-01-28 (+81d) |  |  |
| A68980 | Excavation | 2026-10-13 → 2027-01-02 (+81d) | 2026-10-19 → 2027-01-09 (+82d) |  | 1d → -40.26d |
| A68990 | Pipe Laying | 2026-10-20 → 2027-01-09 (+81d) | 2026-10-26 → 2027-01-16 (+82d) |  | 1d → -40.26d |
| A69000 | Install Manhole | 2026-10-20 → 2027-01-09 (+81d) | 2026-10-26 → 2027-01-16 (+82d) |  | 7d → -34.26d |
| A69010 | Testing & Inspection | 2026-10-27 → 2027-01-16 (+81d) | 2026-11-02 → 2027-01-23 (+82d) |  | 1d → -40.26d |
| A69020 | Backfilling & Compaction | 2026-11-03 → 2027-01-23 (+81d) | 2026-11-08 → 2027-01-28 (+81d) |  | 1d → -40.26d |
| COLLECTOR R-01 L | **COLLECTOR R-01 L** | 2026-06-28 → 2026-08-20 (+53d) | 2026-11-02 → 2026-10-13 (-20d) |  |  |
| MH-32-A-13 /MH-32-A-12 | **MH-32-A-13 /MH-32-A-12** | 2026-06-28 → 2026-08-20 (+53d) | 2026-08-12 → 2026-09-28 (+47d) |  |  |
| A68930 | Excavation | 2026-06-28 → 2026-08-20 A (+53d) | 2026-07-08 → 2026-09-28 A (+82d) | 0% → 100% | 63d → none |
| A68940 | Pipe Laying | 2026-07-09 → 2026-08-20 A (+42d) | 2026-07-20 → 2026-09-28 A (+70d) | 0% → 100% | 63d → none |
| A68950 | Install Manhole | 2026-07-09 → 2026-08-20 A (+42d) | 2026-07-20 → 2026-09-28 A (+70d) | 0% → 100% | 73d → none |
| A68960 | Testing & Inspection | 2026-07-21 → 2026-08-20 A (+30d) | 2026-08-01 → 2026-09-28 A (+58d) | 0% → 100% | 63d → none |
| A68970 | Backfilling & Compaction | 2026-08-02 → 2026-08-20 A (+18d) | 2026-08-12 → 2026-09-28 A (+47d) | 0% → 100% | 63d → none |
| MH-32-A-14 /MH-32-A-13 | **MH-32-A-14 /MH-32-A-13** | 2026-07-09 → 2026-08-20 (+42d) | 2026-08-24 → 2026-10-13 (+50d) |  |  |
| A68880 | Excavation | 2026-07-09 → 2026-08-20 A (+42d) | 2026-07-20 → 2026-09-28 A (+70d) | 0% → 100% | 68d → none |
| A68890 | Pipe Laying | 2026-07-21 → 2026-08-20 A (+30d) | 2026-08-01 → 2026-09-28 A (+58d) | 0% → 100% | 68d → none |
| A68900 | Install Manhole | 2026-07-21 → 2026-08-20 A (+30d) | 2026-08-01 → 2026-09-28 A (+58d) | 0% → 100% | 78d → none |
| A68920 | Backfilling & Compaction | 2026-08-13 → 2026-08-20 A (+7d) | 2026-08-24 → 2026-09-28 A (+35d) | 0% → 100% | 68d → none |
| A68910 | Testing & Inspection | 2026-08-02 → 2026-10-03 (+62d) | 2026-08-12 → 2026-10-13 (+62d) |  | 68d → 92d |
| MH-32-A-14-1 /MH-32-A-14 | **MH-32-A-14-1 /MH-32-A-14** | 2026-07-21 → 2026-08-20 (+30d) | 2026-09-05 → 2026-10-13 (+38d) |  |  |
| A68830 | Excavation | 2026-07-21 → 2026-08-20 A (+30d) | 2026-08-01 → 2026-09-28 A (+58d) | 0% → 100% | 68d → none |
| A68840 | Pipe Laying | 2026-08-02 → 2026-08-20 A (+18d) | 2026-08-12 → 2026-09-28 A (+47d) | 0% → 100% | 68d → none |
| A68850 | Install Manhole | 2026-08-02 → 2026-08-20 A (+18d) | 2026-08-12 → 2026-09-28 A (+47d) | 0% → 100% | 78d → none |
| A68870 | Backfilling & Compaction | 2026-08-25 → 2026-08-20 A (-5d) | 2026-09-05 → 2026-09-28 A (+23d) | 0% → 100% | 68d → none |
| A68860 | Testing & Inspection | 2026-08-13 → 2026-10-03 (+51d) | 2026-08-24 → 2026-10-13 (+50d) |  | 68d → 92d |
| MH-32-A-14-2 /MH-32-A-14-1 | **MH-32-A-14-2 /MH-32-A-14-1** | 2026-08-02 → 2026-08-20 (+18d) | 2026-09-16 → 2026-10-13 (+27d) |  |  |
| A68780 | Excavation | 2026-08-02 → 2026-08-20 A (+18d) | 2026-08-12 → 2026-09-28 A (+47d) | 0% → 100% | 68d → none |
| A68790 | Pipe Laying | 2026-08-13 → 2026-08-20 A (+7d) | 2026-08-24 → 2026-09-28 A (+35d) | 0% → 100% | 68d → none |
| A68800 | Install Manhole | 2026-08-13 → 2026-08-20 A (+7d) | 2026-08-24 → 2026-09-28 A (+35d) | 0% → 100% | 78d → none |
| A68820 | Backfilling & Compaction | 2026-09-06 → 2026-08-20 A (-17d) | 2026-09-16 → 2026-09-28 A (+12d) | 0% → 100% | 68d → none |
| A68810 | Testing & Inspection | 2026-08-25 → 2026-10-03 (+39d) | 2026-09-05 → 2026-10-13 (+38d) |  | 68d → 92d |
| MH-32-A-14-3 /MH-32-A-14-2 | **MH-32-A-14-3 /MH-32-A-14-2** | 2026-08-13 → 2026-08-20 (+7d) | 2026-09-28 → 2026-10-13 (+15d) |  |  |
| A68730 | Excavation | 2026-08-13 → 2026-08-20 A (+7d) | 2026-08-24 → 2026-09-28 A (+35d) | 0% → 100% | 68d → none |

| ID | Task | Start | Finish | Complete | Total float |
| --- | --- | --- | --- | --- | --- |
| A68740 | Pipe Laying | 2026-08-25 → 2026-08-20 A (-5d) | 2026-09-05 → 2026-09-28 A (+23d) | 0% → 100% | 68d → none |
| A68750 | Install Manhole | 2026-08-25 → 2026-08-20 A (-5d) | 2026-09-05 → 2026-09-28 A (+23d) | 0% → 100% | 78d → none |
| A68770 | Backfilling & Compaction | 2026-09-17 → 2026-08-20 A (-28d) | 2026-09-28 A | 0% → 100% | 68d → none |
| A68760 | Testing & Inspection | 2026-09-06 → 2026-10-03 (+27d) | 2026-09-16 → 2026-10-13 (+27d) |  | 68d → 92d |
| MH-32-A-14-4 /MH-32-A-14-3 | **MH-32-A-14-4 /MH-32-A-14-3** | 2026-08-25 → 2026-08-20 (-5d) | 2026-10-10 → 2026-10-13 (+3d) |  |  |
| A68680 | Excavation | 2026-08-25 → 2026-08-20 A (-5d) | 2026-09-05 → 2026-09-28 A (+23d) | 0% → 100% | 68d → none |
| A68690 | Pipe Laying | 2026-09-06 → 2026-08-20 A (-17d) | 2026-09-16 → 2026-09-28 A (+12d) | 0% → 100% | 68d → none |
| A68700 | Install Manhole | 2026-09-06 → 2026-08-20 A (-17d) | 2026-09-16 → 2026-09-28 A (+12d) | 0% → 100% | 78d → none |
| A68720 | Backfilling & Compaction | 2026-09-29 → 2026-08-20 A (-40d) | 2026-10-10 → 2026-09-28 A (-12d) | 0% → 100% | 68d → none |
| A68710 | Testing & Inspection | 2026-09-17 → 2026-10-03 (+16d) | 2026-09-28 → 2026-10-13 (+15d) |  | 68d → 92d |
| MH-32-A-14-5 /MH-32-A-14-4 | **MH-32-A-14-5 /MH-32-A-14-4** | 2026-09-06 → 2026-08-20 (-17d) | 2026-10-21 → 2026-10-13 (-8d) |  |  |
| A68630 | Excavation | 2026-09-06 → 2026-08-20 A (-17d) | 2026-09-16 → 2026-09-28 A (+12d) | 0% → 100% | 68d → none |
| A68640 | Pipe Laying | 2026-09-17 → 2026-08-20 A (-28d) | 2026-09-28 A | 0% → 100% | 68d → none |
| A68650 | Install Manhole | 2026-09-17 → 2026-08-20 A (-28d) | 2026-09-28 A | 0% → 100% | 78d → none |
| A68670 | Backfilling & Compaction | 2026-10-11 → 2026-08-20 A (-52d) | 2026-10-21 → 2026-09-28 A (-23d) | 0% → 100% | 68d → none |
| A68660 | Testing & Inspection | 2026-09-29 → 2026-10-03 (+4d) | 2026-10-10 → 2026-10-13 (+3d) |  | 68d → 92d |
| MH-59-A-1 /MH-1 | **MH-59-A-1 /MH-1** | 2026-09-17 → 2026-08-20 (-28d) | 2026-11-02 → 2026-10-13 (-20d) |  |  |
| A68580 | Excavation | 2026-09-17 → 2026-08-20 A (-28d) | 2026-09-28 A | 0% → 100% | 68d → none |
| A68590 | Pipe Laying | 2026-09-29 → 2026-08-20 A (-40d) | 2026-10-10 → 2026-09-28 A (-12d) | 0% → 100% | 68d → none |
| A68600 | Install Manhole | 2026-09-29 → 2026-08-20 A (-40d) | 2026-10-10 → 2026-09-28 A (-12d) | 0% → 100% | 78d → none |
| A68620 | Backfilling & Compaction | 2026-10-22 → 2026-08-20 A (-63d) | 2026-11-02 → 2026-09-28 A (-35d) | 0% → 100% | 68d → none |
| A68610 | Testing & Inspection | 2026-10-11 → 2026-10-03 (-8d) | 2026-10-21 → 2026-10-13 (-8d) |  | 68d → 92d |
| COLLECTOR R-01 R | **COLLECTOR R-01 R** | 2026-06-28 → 2026-08-20 (+53d) | 2026-11-02 → 2026-09-28 (-35d) |  |  |
| MH-32-A-11-1 /MH-32-A-11 | **MH-32-A-11-1 /MH-32-A-11** | 2026-06-28 → 2026-08-20 (+53d) | 2026-08-12 → 2026-09-28 (+47d) |  |  |
| A68530 | Excavation | 2026-06-28 → 2026-08-20 A (+53d) | 2026-07-08 → 2026-09-28 A (+82d) | 0% → 100% | 63d → none |
| A68540 | Pipe Laying | 2026-07-09 → 2026-08-20 A (+42d) | 2026-07-20 → 2026-09-28 A (+70d) | 0% → 100% | 63d → none |
| A68550 | Install Manhole | 2026-07-09 → 2026-08-20 A (+42d) | 2026-07-20 → 2026-09-28 A (+70d) | 0% → 100% | 73d → none |
| A68560 | Testing & Inspection | 2026-07-21 → 2026-08-20 A (+30d) | 2026-08-01 → 2026-09-28 A (+58d) | 0% → 100% | 63d → none |
| A68570 | Backfilling & Compaction | 2026-08-02 → 2026-08-20 A (+18d) | 2026-08-12 → 2026-09-28 A (+47d) | 0% → 100% | 63d → none |
| MH-32-A-11-2 /MH-32-A-11-1 | **MH-32-A-11-2 /MH-32-A-11-1** | 2026-07-09 → 2026-08-20 (+42d) | 2026-08-24 → 2026-09-28 (+35d) |  |  |
| A68480 | Excavation | 2026-07-09 → 2026-08-20 A (+42d) | 2026-07-20 → 2026-09-28 A (+70d) | 0% → 100% | 68d → none |
| A68490 | Pipe Laying | 2026-07-21 → 2026-08-20 A (+30d) | 2026-08-01 → 2026-09-28 A (+58d) | 0% → 100% | 68d → none |
| A68500 | Install Manhole | 2026-07-21 → 2026-08-20 A (+30d) | 2026-08-01 → 2026-09-28 A (+58d) | 0% → 100% | 78d → none |
| A68510 | Testing & Inspection | 2026-08-02 → 2026-08-20 A (+18d) | 2026-08-12 → 2026-09-28 A (+47d) | 0% → 100% | 68d → none |
| A68520 | Backfilling & Compaction | 2026-08-13 → 2026-08-20 A (+7d) | 2026-08-24 → 2026-09-28 A (+35d) | 0% → 100% | 68d → none |
| MH-32-A-11-3 /MH-32-A-11-2 | **MH-32-A-11-3 /MH-32-A-11-2** | 2026-07-21 → 2026-08-20 (+30d) | 2026-09-05 → 2026-09-28 (+23d) |  |  |
| A68430 | Excavation | 2026-07-21 → 2026-08-20 A (+30d) | 2026-08-01 → 2026-09-28 A (+58d) | 0% → 100% | 68d → none |
| A68440 | Pipe Laying | 2026-08-02 → 2026-08-20 A (+18d) | 2026-08-12 → 2026-09-28 A (+47d) | 0% → 100% | 68d → none |
| A68450 | Install Manhole | 2026-08-02 → 2026-08-20 A (+18d) | 2026-08-12 → 2026-09-28 A (+47d) | 0% → 100% | 78d → none |
| A68460 | Testing & Inspection | 2026-08-13 → 2026-08-20 A (+7d) | 2026-08-24 → 2026-09-28 A (+35d) | 0% → 100% | 68d → none |
| A68470 | Backfilling & Compaction | 2026-08-25 → 2026-08-20 A (-5d) | 2026-09-05 → 2026-09-28 A (+23d) | 0% → 100% | 68d → none |
| MH-32-A-11-4 /MH-32-A-11-3 | **MH-32-A-11-4 /MH-32-A-11-3** | 2026-08-02 → 2026-08-20 (+18d) | 2026-09-16 → 2026-09-28 (+12d) |  |  |
| A68380 | Excavation | 2026-08-02 → 2026-08-20 A (+18d) | 2026-08-12 → 2026-09-28 A (+47d) | 0% → 100% | 68d → none |
| A68390 | Pipe Laying | 2026-08-13 → 2026-08-20 A (+7d) | 2026-08-24 → 2026-09-28 A (+35d) | 0% → 100% | 68d → none |
| A68400 | Install Manhole | 2026-08-13 → 2026-08-20 A (+7d) | 2026-08-24 → 2026-09-28 A (+35d) | 0% → 100% | 78d → none |
| A68410 | Testing & Inspection | 2026-08-25 → 2026-08-20 A (-5d) | 2026-09-05 → 2026-09-28 A (+23d) | 0% → 100% | 68d → none |
| A68420 | Backfilling & Compaction | 2026-09-06 → 2026-08-20 A (-17d) | 2026-09-16 → 2026-09-28 A (+12d) | 0% → 100% | 68d → none |
| MH-32-A-11-5 /MH-32-A-11-4 | **MH-32-A-11-5 /MH-32-A-11-4** | 2026-08-13 → 2026-08-20 (+7d) |  |  |  |
| A68330 | Excavation | 2026-08-13 → 2026-08-20 A (+7d) | 2026-08-24 → 2026-09-28 A (+35d) | 0% → 100% | 68d → none |
| A68340 | Pipe Laying | 2026-08-25 → 2026-08-20 A (-5d) | 2026-09-05 → 2026-09-28 A (+23d) | 0% → 100% | 68d → none |
| A68350 | Install Manhole | 2026-08-25 → 2026-08-20 A (-5d) | 2026-09-05 → 2026-09-28 A (+23d) | 0% → 100% | 78d → none |
| A68360 | Testing & Inspection | 2026-09-06 → 2026-08-20 A (-17d) | 2026-09-16 → 2026-09-28 A (+12d) | 0% → 100% | 68d → none |
| A68370 | Backfilling & Compaction | 2026-09-17 → 2026-08-20 A (-28d) | 2026-09-28 A | 0% → 100% | 68d → none |
| MH-32-A-11-6 /MH-32-A-11-5 | **MH-32-A-11-6 /MH-32-A-11-5** | 2026-08-25 → 2026-08-20 (-5d) | 2026-10-10 → 2026-09-28 (-12d) |  |  |
| A68280 | Excavation | 2026-08-25 → 2026-08-20 A (-5d) | 2026-09-05 → 2026-09-28 A (+23d) | 0% → 100% | 68d → none |
| A68290 | Pipe Laying | 2026-09-06 → 2026-08-20 A (-17d) | 2026-09-16 → 2026-09-28 A (+12d) | 0% → 100% | 68d → none |
| A68300 | Install Manhole | 2026-09-06 → 2026-08-20 A (-17d) | 2026-09-16 → 2026-09-28 A (+12d) | 0% → 100% | 78d → none |
| A68310 | Testing & Inspection | 2026-09-17 → 2026-08-20 A (-28d) | 2026-09-28 A | 0% → 100% | 68d → none |
| A68320 | Backfilling & Compaction | 2026-09-29 → 2026-08-20 A (-40d) | 2026-10-10 → 2026-09-28 A (-12d) | 0% → 100% | 68d → none |
| MH-32-A-11-7 /MH-32-A-11-6 | **MH-32-A-11-7 /MH-32-A-11-6** | 2026-09-06 → 2026-08-20 (-17d) | 2026-10-21 → 2026-09-28 (-23d) |  |  |
| A68230 | Excavation | 2026-09-06 → 2026-08-20 A (-17d) | 2026-09-16 → 2026-09-28 A (+12d) | 0% → 100% | 68d → none |
| A68240 | Pipe Laying | 2026-09-17 → 2026-08-20 A (-28d) | 2026-09-28 A | 0% → 100% | 68d → none |
| A68250 | Install Manhole | 2026-09-17 → 2026-08-20 A (-28d) | 2026-09-28 A | 0% → 100% | 78d → none |
| A68260 | Testing & Inspection | 2026-09-29 → 2026-08-20 A (-40d) | 2026-10-10 → 2026-09-28 A (-12d) | 0% → 100% | 68d → none |
| A68270 | Backfilling & Compaction | 2026-10-11 → 2026-08-20 A (-52d) | 2026-10-21 → 2026-09-28 A (-23d) | 0% → 100% | 68d → none |
| MH-58-A-1 /MH-58-A | **MH-58-A-1 /MH-58-A** | 2026-09-17 → 2026-08-20 (-28d) | 2026-11-02 → 2026-09-28 (-35d) |  |  |
| A68180 | Excavation | 2026-09-17 → 2026-08-20 A (-28d) | 2026-09-28 A | 0% → 100% | 68d → none |
| A68190 | Pipe Laying | 2026-09-29 → 2026-08-20 A (-40d) | 2026-10-10 → 2026-09-28 A (-12d) | 0% → 100% | 68d → none |
| A68200 | Install Manhole | 2026-09-29 → 2026-08-20 A (-40d) | 2026-10-10 → 2026-09-28 A (-12d) | 0% → 100% | 78d → none |
| A68210 | Testing & Inspection | 2026-10-11 → 2026-08-20 A (-52d) | 2026-10-21 → 2026-09-28 A (-23d) | 0% → 100% | 68d → none |

| ID | Task | Start | Finish | Complete | Total float | Predecessors |
| --- | --- | --- | --- | --- | --- | --- |
| A68220 | Backfilling & Compaction | 2026-10-22 → 2026-08-20 A (-63d) | 2026-11-02 → 2026-09-28 A (-35d) | 0% → 100% | 68d → none |  |
| SEWEGE NETWORK | **SEWEGE NETWORK** | 2026-03-31 → 2026-03-04 (-27d) | 2027-01-17 → 2027-03-16 (+58d) |  |  |  |
| LR 01 | **LR 01** | 2026-05-23 → 2026-03-04 (-80d) | 2026-10-18 → 2026-12-03 (+46d) |  |  |  |
| MH-1.10 / MH-1.11 | **MH-1.10 / MH-1.11** | 2026-05-23 → 2026-03-04 (-80d) | 2026-07-07 → 2026-04-05 (-93d) |  |  |  |
| A38560 | Excavation | 2026-05-23 → 2026-03-04 A (-80d) | 2026-05-24 → 2026-04-05 A (-49d) | 0% → 100% | 103d → none | A74620, A1190, A1180, A1220, A1210, A1200, A10940, A10960, A10950, A11040 SS+10d, A11080 SS+10d, A11040 FF+10d, A11080 FF+10d → A74620, A1190, A1180, A1220, A1210, A1200, A10940, A10960, A10950 |
| A38580 | Pipe Laying | 2026-05-25 → 2026-03-04 A (-82d) | 2026-06-02 → 2026-04-05 A (-58d) | 0% → 100% | 103d → none |  |
| A38610 | Install Manhole | 2026-06-29 → 2026-03-04 A (-117d) | 2026-07-02 → 2026-04-05 A (-88d) | 0% → 100% | 79d → none | A38560, A10230 → A38560 |
| A38620 | Testing & Inspection | 2026-06-03 → 2026-03-04 A (-91d) | 2026-06-04 → 2026-04-05 A (-60d) | 0% → 100% | 103d → none |  |
| A38640 | Backfilling & Compaction | 2026-07-04 → 2026-03-04 A (-122d) | 2026-07-07 → 2026-04-05 A (-93d) | 0% → 100% | 79d → none |  |
| MH-1.10.0 / MH-1.10.1 | **MH-1.10.0 / MH-1.10.1** | 2026-05-25 → 2026-03-04 (-82d) | 2026-07-12 → 2026-04-05 (-98d) |  |  |  |
| A38650 | Excavation | 2026-05-25 → 2026-03-04 A (-82d) | 2026-05-26 → 2026-04-05 A (-51d) | 0% → 100% | 105d → none |  |
| A38660 | Pipe Laying | 2026-05-27 → 2026-03-04 A (-84d) | 2026-06-04 → 2026-04-05 A (-60d) | 0% → 100% | 105d → none |  |
| A38670 | Install Manhole | 2026-06-29 → 2026-03-04 A (-117d) | 2026-07-02 → 2026-04-05 A (-88d) | 0% → 100% | 83d → none | A38650, A10230 → A38650 |
| A38680 | Testing & Inspection | 2026-06-06 → 2026-03-04 A (-94d) | 2026-06-07 → 2026-04-05 A (-63d) | 0% → 100% | 105d → none |  |
| A38690 | Backfilling & Compaction | 2026-07-08 → 2026-03-04 A (-126d) | 2026-07-12 → 2026-04-05 A (-98d) | 0% → 100% | 79d → none |  |
| MH-1.10.1 / MH-1.10.2 | **MH-1.10.1 / MH-1.10.2** | 2026-05-27 → 2026-03-04 (-84d) | 2026-07-16 → 2026-04-05 (-102d) |  |  |  |
| A38700 | Excavation | 2026-05-27 → 2026-03-04 A (-84d) | 2026-05-28 → 2026-04-05 A (-53d) | 0% → 100% | 107d → none |  |
| A38710 | Pipe Laying | 2026-05-30 → 2026-03-04 A (-87d) | 2026-06-07 → 2026-04-05 A (-63d) | 0% → 100% | 107d → none |  |
| A38720 | Install Manhole | 2026-06-29 → 2026-03-04 A (-117d) | 2026-07-02 → 2026-04-05 A (-88d) | 0% → 100% | 87d → none | A38700, A10230 → A38700 |
| A38730 | Testing & Inspection | 2026-06-08 → 2026-03-04 A (-96d) | 2026-06-09 → 2026-04-05 A (-65d) | 0% → 100% | 107d → none |  |
| A38740 | Backfilling & Compaction | 2026-07-13 → 2026-03-04 A (-131d) | 2026-07-16 → 2026-04-05 A (-102d) | 0% → 100% | 79d → none |  |
| MH-1.11 / MH-1.12 | **MH-1.11 / MH-1.12** | 2026-05-30 → 2026-03-04 (-87d) | 2026-07-21 → 2026-04-05 (-107d) |  |  |  |
| A38750 | Excavation | 2026-05-30 → 2026-03-04 A (-87d) | 2026-05-31 → 2026-04-05 A (-56d) | 0% → 100% | 108d → none |  |
| A38760 | Pipe Laying | 2026-06-01 → 2026-03-04 A (-89d) | 2026-06-09 → 2026-04-05 A (-65d) | 0% → 100% | 109d → none |  |
| A38770 | Install Manhole | 2026-06-29 → 2026-03-04 A (-117d) | 2026-07-02 → 2026-04-05 A (-88d) | 0% → 100% | 91d → none | A38750, A10230 → A38750 |
| A38780 | Testing & Inspection | 2026-06-10 → 2026-03-04 A (-98d) | 2026-06-11 → 2026-04-05 A (-67d) | 0% → 100% | 109d → none |  |
| A38790 | Backfilling & Compaction | 2026-07-18 → 2026-03-04 A (-136d) | 2026-07-21 → 2026-04-05 A (-107d) | 0% → 100% | 79d → none |  |
| MH-1.12.0 / MH-1.12.1 | **MH-1.12.0 / MH-1.12.1** | 2026-06-01 → 2026-03-04 (-89d) | 2026-07-26 → 2026-11-12 (+109d) |  |  |  |
| A38800 | Excavation | 2026-06-01 → 2026-03-04 A (-89d) | 2026-06-02 → 2026-04-05 A (-58d) | 0% → 100% | 108d → none |  |
| A38810 | Pipe Laying | 2026-06-03 → 2026-03-04 A (-91d) | 2026-06-11 → 2026-04-05 A (-67d) | 0% → 100% | 111d → none |  |
| A38820 | Install Manhole | 2026-06-29 → 2026-03-04 A (-117d) | 2026-07-02 → 2026-04-05 A (-88d) | 0% → 100% | 95d → none | A38800, A10230 → A38800 |
| A38840 | Backfilling & Compaction | 2026-07-22 → 2026-03-04 A (-140d) | 2026-07-26 → 2026-04-05 A (-112d) | 0% → 100% | 79d → none |  |
| A38830 | Testing & Inspection | 2026-06-13 → 2026-11-11 (+151d) | 2026-06-14 → 2026-11-12 (+151d) |  | 111d → 57d |  |
| MH-1.12.1 / MH-1.12.2 | **MH-1.12.1 / MH-1.12.2** | 2026-06-03 → 2026-03-04 (-91d) | 2026-07-30 → 2026-11-12 (+105d) |  |  |  |
| A38850 | Excavation | 2026-06-03 → 2026-03-04 A (-91d) | 2026-06-04 → 2026-04-05 A (-60d) | 0% → 100% | 108d → none |  |
| A38860 | Pipe Laying | 2026-06-06 → 2026-03-04 A (-94d) | 2026-06-14 → 2026-04-05 A (-70d) | 0% → 100% | 113d → none |  |
| A38870 | Install Manhole | 2026-06-29 → 2026-03-04 A (-117d) | 2026-07-02 → 2026-04-05 A (-88d) | 0% → 100% | 99d → none | A38850, A10230 → A38850 |
| A38890 | Backfilling & Compaction | 2026-07-27 → 2026-03-04 A (-145d) | 2026-07-30 → 2026-04-05 A (-116d) | 0% → 100% | 79d → none |  |
| A38880 | Testing & Inspection | 2026-06-15 → 2026-11-11 (+149d) | 2026-06-16 → 2026-11-12 (+149d) |  | 113d → 57d |  |
| MH-1.12.1.0 / MH-1.12.1.1 | **MH-1.12.1.0 / MH-1.12.1.1** | 2026-06-06 → 2026-03-04 (-94d) | 2026-08-04 → 2026-11-12 (+100d) |  |  |  |
| A38900 | Excavation | 2026-06-06 → 2026-03-04 A (-94d) | 2026-06-07 → 2026-04-05 A (-63d) | 0% → 100% | 108d → none |  |
| A38910 | Pipe Laying | 2026-06-08 → 2026-03-04 A (-96d) | 2026-06-16 → 2026-04-05 A (-72d) | 0% → 100% | 115d → none |  |
| A38920 | Install Manhole | 2026-06-29 → 2026-03-04 A (-117d) | 2026-07-02 → 2026-04-05 A (-88d) | 0% → 100% | 103d → none | A38900, A10230 → A38900 |
| A38940 | Backfilling & Compaction | 2026-08-01 → 2026-03-04 A (-150d) | 2026-08-04 → 2026-04-05 A (-121d) | 0% → 100% | 79d → none |  |
| A38930 | Testing & Inspection | 2026-06-17 → 2026-11-11 (+147d) | 2026-06-18 → 2026-11-12 (+147d) |  | 115d → 57d |  |
| MH-1.12.2 / MH-1.12.3 | **MH-1.12.2 / MH-1.12.3** | 2026-06-08 → 2026-03-04 (-96d) | 2026-08-09 → 2026-11-12 (+95d) |  |  |  |
| A38950 | Excavation | 2026-06-08 → 2026-03-04 A (-96d) | 2026-06-09 → 2026-04-05 A (-65d) | 0% → 100% | 108d → none |  |
| A38960 | Pipe Laying | 2026-06-10 → 2026-03-04 A (-98d) | 2026-06-18 → 2026-04-05 A (-74d) | 0% → 100% | 117d → none |  |
| A38970 | Install Manhole | 2026-06-10 → 2026-03-04 A (-98d) | 2026-06-14 → 2026-04-05 A (-70d) | 0% → 100% | 123d → none |  |
| A38990 | Backfilling & Compaction | 2026-08-05 → 2026-03-04 A (-154d) | 2026-08-09 → 2026-04-05 A (-126d) | 0% → 100% | 79d → none |  |
| A38980 | Testing & Inspection | 2026-06-20 → 2026-11-11 (+144d) | 2026-06-21 → 2026-11-12 (+144d) |  | 117d → 57d |  |
| MH-1.12.2.0 / MH-1.12.2.1 | **MH-1.12.2.0 / MH-1.12.2.1** | 2026-06-10 → 2026-03-04 (-98d) | 2026-08-13 → 2026-11-12 (+91d) |  |  |  |
| A39000 | Excavation | 2026-06-10 → 2026-03-04 A (-98d) | 2026-06-11 → 2026-04-05 A (-67d) | 0% → 100% | 108d → none |  |
| A39010 | Pipe Laying | 2026-06-13 → 2026-03-04 A (-101d) | 2026-06-21 → 2026-04-05 A (-77d) | 0% → 100% | 119d → none |  |
| A39020 | Install Manhole | 2026-06-13 → 2026-03-04 A (-101d) | 2026-06-16 → 2026-04-05 A (-72d) | 0% → 100% | 125d → none |  |
| A39040 | Backfilling & Compaction | 2026-08-10 → 2026-03-04 A (-159d) | 2026-08-13 → 2026-04-05 A (-130d) | 0% → 100% | 79d → none |  |
| A39030 | Testing & Inspection | 2026-06-22 → 2026-11-11 (+142d) | 2026-06-23 → 2026-11-12 (+142d) |  | 119d → 57d |  |
| MH-1.12.3.0 / MH-1.12.3.1 | **MH-1.12.3.0 / MH-1.12.3.1** | 2026-06-13 → 2026-03-04 (-101d) | 2026-08-18 → 2026-11-12 (+86d) |  |  |  |
| A39050 | Excavation | 2026-06-13 → 2026-03-04 A (-101d) | 2026-06-14 → 2026-04-05 A (-70d) | 0% → 100% | 108d → none |  |
| A39060 | Pipe Laying | 2026-06-15 → 2026-03-04 A (-103d) | 2026-06-23 → 2026-04-05 A (-79d) | 0% → 100% | 121d → none |  |
| A39070 | Install Manhole | 2026-06-15 → 2026-03-04 A (-103d) | 2026-06-18 → 2026-04-05 A (-74d) | 0% → 100% | 127d → none |  |
| A39090 | Backfilling & Compaction | 2026-08-15 → 2026-03-04 A (-164d) | 2026-08-18 → 2026-04-05 A (-135d) | 0% → 100% | 79d → none |  |
| A39080 | Testing & Inspection | 2026-06-24 → 2026-11-11 (+140d) | 2026-06-25 → 2026-11-12 (+140d) |  | 121d → 57d |  |
| MH-1.12.3.1 / MH-1.12.3.2 | **MH-1.12.3.1 / MH-1.12.3.2** | 2026-06-15 → 2026-03-04 (-103d) | 2026-08-23 → 2026-11-12 (+81d) |  |  |  |
| A39100 | Excavation | 2026-06-15 → 2026-03-04 A (-103d) | 2026-06-16 → 2026-04-05 A (-72d) | 0% → 100% | 108d → none |  |
| A39110 | Pipe Laying | 2026-06-17 → 2026-03-04 A (-105d) | 2026-06-25 → 2026-04-05 A (-81d) | 0% → 100% | 123d → none |  |
| A39120 | Install Manhole | 2026-06-17 → 2026-03-04 A (-105d) | 2026-06-21 → 2026-04-05 A (-77d) | 0% → 100% | 129d → none |  |
| A39140 | Backfilling & Compaction | 2026-08-19 → 2026-03-04 A (-168d) | 2026-08-23 → 2026-04-05 A (-140d) | 0% → 100% | 79d → none |  |
| A39130 | Testing & Inspection | 2026-06-27 → 2026-11-11 (+137d) | 2026-06-28 → 2026-11-12 (+137d) |  | 123d → 57d |  |
| MH-1.12.3.2.0 / MH-1.12.3.2.1 | **MH-1.12.3.2.0 / MH-1.12.3.2.1** | 2026-06-17 → 2026-03-04 (-105d) | 2026-08-27 → 2026-11-12 (+77d) |  |  |  |

| ID | Task | Start | Finish | Complete | Total float |
| --- | --- | --- | --- | --- | --- |
| A39150 | Excavation | 2026-06-17 → 2026-03-04 A (-105d) | 2026-06-18 → 2026-04-05 A (-74d) | 0% → 100% | 108d → none |
| A39160 | Pipe Laying | 2026-06-20 → 2026-03-04 A (-108d) | 2026-06-28 → 2026-04-05 A (-84d) | 0% → 100% | 125d → none |
| A39170 | Install Manhole | 2026-06-20 → 2026-03-04 A (-108d) | 2026-06-23 → 2026-04-05 A (-79d) | 0% → 100% | 131d → none |
| A39190 | Backfilling & Compaction | 2026-08-24 → 2026-03-04 A (-173d) | 2026-08-27 → 2026-04-05 A (-144d) | 0% → 100% | 79d → none |
| A39180 | Testing & Inspection | 2026-06-29 → 2026-11-11 (+135d) | 2026-06-30 → 2026-11-12 (+135d) |  | 125d → 57d |
| MH-1.9 / MH-1.10 | **MH-1.9 / MH-1.10** | 2026-06-20 → 2026-03-04 (-108d) | 2026-09-01 → 2026-11-12 (+72d) |  |  |
| A39200 | Excavation | 2026-06-20 → 2026-03-04 A (-108d) | 2026-06-21 → 2026-04-05 A (-77d) | 0% → 100% | 108d → none |
| A39210 | Pipe Laying | 2026-06-22 → 2026-03-04 A (-110d) | 2026-06-30 → 2026-04-05 A (-86d) | 0% → 100% | 127d → none |
| A39220 | Install Manhole | 2026-06-22 → 2026-03-04 A (-110d) | 2026-06-25 → 2026-04-05 A (-81d) | 0% → 100% | 133d → none |
| A39240 | Backfilling & Compaction | 2026-08-29 → 2026-03-04 A (-178d) | 2026-09-01 → 2026-04-05 A (-149d) | 0% → 100% | 79d → none |
| A39230 | Testing & Inspection | 2026-07-01 → 2026-11-11 (+133d) | 2026-07-02 → 2026-11-12 (+133d) |  | 127d → 57d |
| MH-2.17 / MH-2.18 | **MH-2.17 / MH-2.18** | 2026-06-22 → 2026-03-04 (-110d) | 2026-09-06 → 2026-11-12 (+67d) |  |  |
| A39250 | Excavation | 2026-06-22 → 2026-03-04 A (-110d) | 2026-06-23 → 2026-04-05 A (-79d) | 0% → 100% | 108d → none |
| A39260 | Pipe Laying | 2026-06-24 → 2026-03-04 A (-112d) | 2026-07-02 → 2026-04-05 A (-88d) | 0% → 100% | 129d → none |
| A39270 | Install Manhole | 2026-06-24 → 2026-03-04 A (-112d) | 2026-06-28 → 2026-04-05 A (-84d) | 0% → 100% | 135d → none |
| A39290 | Backfilling & Compaction | 2026-09-02 → 2026-03-04 A (-182d) | 2026-09-06 → 2026-04-05 A (-154d) | 0% → 100% | 79d → none |
| A39280 | Testing & Inspection | 2026-07-04 → 2026-11-11 (+130d) | 2026-07-05 → 2026-11-12 (+130d) |  | 129d → 57d |
| MH-2.18 / MH-2.19 | **MH-2.18 / MH-2.19** | 2026-06-24 → 2026-03-04 (-112d) | 2026-09-10 → 2026-11-12 (+63d) |  |  |
| A39300 | Excavation | 2026-06-24 → 2026-03-04 A (-112d) | 2026-06-25 → 2026-04-05 A (-81d) | 0% → 100% | 108d → none |
| A39310 | Pipe Laying | 2026-06-27 → 2026-03-04 A (-115d) | 2026-07-05 → 2026-04-05 A (-91d) | 0% → 100% | 131d → none |
| A39320 | Install Manhole | 2026-06-27 → 2026-03-04 A (-115d) | 2026-06-30 → 2026-04-05 A (-86d) | 0% → 100% | 137d → none |
| A39340 | Backfilling & Compaction | 2026-09-07 → 2026-03-04 A (-187d) | 2026-09-10 → 2026-04-05 A (-158d) | 0% → 100% | 79d → none |
| A39330 | Testing & Inspection | 2026-07-06 → 2026-11-11 (+128d) | 2026-07-07 → 2026-11-12 (+128d) |  | 131d → 57d |
| MH-2.19 / MH-2.20 | **MH-2.19 / MH-2.20** | 2026-06-27 → 2026-04-04 (-84d) | 2026-09-15 → 2026-11-12 (+58d) |  |  |
| A39350 | Excavation | 2026-06-27 → 2026-04-04 A (-84d) | 2026-06-28 → 2026-05-05 A (-54d) | 0% → 100% | 108d → none |
| A39360 | Pipe Laying | 2026-06-29 → 2026-04-04 A (-86d) | 2026-07-07 → 2026-05-05 A (-63d) | 0% → 100% | 133d → none |
| A39370 | Install Manhole | 2026-06-29 → 2026-04-04 A (-86d) | 2026-07-02 → 2026-05-05 A (-58d) | 0% → 100% | 139d → none |
| A39390 | Backfilling & Compaction | 2026-09-12 → 2026-04-04 A (-161d) | 2026-09-15 → 2026-05-05 A (-133d) | 0% → 100% | 79d → none |
| A39380 | Testing & Inspection | 2026-07-08 → 2026-11-11 (+126d) | 2026-07-09 → 2026-11-12 (+126d) |  | 133d → 57d |
| MH-2.20 / MH-2.21 | **MH-2.20 / MH-2.21** | 2026-06-29 → 2026-04-04 (-86d) | 2026-09-20 → 2026-11-12 (+53d) |  |  |
| A39400 | Excavation | 2026-06-29 → 2026-04-04 A (-86d) | 2026-06-30 → 2026-05-05 A (-56d) | 0% → 100% | 108d → none |
| A39410 | Pipe Laying | 2026-07-01 → 2026-04-04 A (-88d) | 2026-07-09 → 2026-05-05 A (-65d) | 0% → 100% | 135d → none |
| A39420 | Install Manhole | 2026-07-01 → 2026-04-04 A (-88d) | 2026-07-05 → 2026-05-05 A (-61d) | 0% → 100% | 141d → none |
| A39440 | Backfilling & Compaction | 2026-09-16 → 2026-04-04 A (-165d) | 2026-09-20 → 2026-05-05 A (-138d) | 0% → 100% | 79d → none |
| A39430 | Testing & Inspection | 2026-07-11 → 2026-11-11 (+123d) | 2026-07-12 → 2026-11-12 (+123d) |  | 135d → 57d |
| MH-2.21 / MH-2.22 | **MH-2.21 / MH-2.22** | 2026-07-01 → 2026-04-04 (-88d) | 2026-09-24 → 2026-11-12 (+49d) |  |  |
| A39450 | Excavation | 2026-07-01 → 2026-04-04 A (-88d) | 2026-07-02 → 2026-05-05 A (-58d) | 0% → 100% | 108d → none |
| A39460 | Pipe Laying | 2026-07-04 → 2026-04-04 A (-91d) | 2026-07-07 → 2026-05-05 A (-63d) | 0% → 100% | 141d → none |
| A39470 | Install Manhole | 2026-07-04 → 2026-04-04 A (-91d) | 2026-07-07 → 2026-05-05 A (-63d) | 0% → 100% | 143d → none |
| A39490 | Backfilling & Compaction | 2026-09-21 → 2026-04-04 A (-170d) | 2026-09-24 → 2026-05-05 A (-142d) | 0% → 100% | 79d → none |
| A39480 | Testing & Inspection | 2026-07-08 → 2026-11-11 (+126d) | 2026-07-09 → 2026-11-12 (+126d) |  | 141d → 57d |
| MH-2.22 / MH-2.23 | **MH-2.22 / MH-2.23** | 2026-07-04 → 2026-04-04 (-91d) | 2026-09-29 → 2026-11-12 (+44d) |  |  |
| A39500 | Excavation | 2026-07-04 → 2026-04-04 A (-91d) | 2026-07-05 → 2026-05-05 A (-61d) | 0% → 100% | 108d → none |
| A39510 | Pipe Laying | 2026-07-06 → 2026-04-04 A (-93d) | 2026-07-14 → 2026-05-05 A (-70d) | 0% → 100% | 139d → none |
| A39520 | Install Manhole | 2026-07-06 → 2026-04-04 A (-93d) | 2026-07-09 → 2026-05-05 A (-65d) | 0% → 100% | 145d → none |
| A39540 | Backfilling & Compaction | 2026-09-26 → 2026-04-04 A (-175d) | 2026-09-29 → 2026-05-05 A (-147d) | 0% → 100% | 79d → none |
| A39530 | Testing & Inspection | 2026-07-15 → 2026-11-11 (+119d) | 2026-07-16 → 2026-11-12 (+119d) |  | 139d → 57d |
| MH-2.23 / MH-2.24 | **MH-2.23 / MH-2.24** | 2026-07-06 → 2026-04-04 (-93d) | 2026-10-04 → 2026-11-12 (+39d) |  |  |
| A39550 | Excavation | 2026-07-06 → 2026-04-04 A (-93d) | 2026-07-07 → 2026-05-05 A (-63d) | 0% → 100% | 108d → none |
| A39560 | Pipe Laying | 2026-07-08 → 2026-04-04 A (-95d) | 2026-07-16 → 2026-05-05 A (-72d) | 0% → 100% | 141d → none |
| A39570 | Install Manhole | 2026-07-08 → 2026-04-04 A (-95d) | 2026-07-12 → 2026-05-05 A (-68d) | 0% → 100% | 147d → none |
| A39590 | Backfilling & Compaction | 2026-09-30 → 2026-04-04 A (-179d) | 2026-10-04 → 2026-05-05 A (-152d) | 0% → 100% | 79d → none |
| A39580 | Testing & Inspection | 2026-07-18 → 2026-11-11 (+116d) | 2026-07-19 → 2026-11-12 (+116d) |  | 141d → 57d |
| MH-2.24 / MH-2.25 | **MH-2.24 / MH-2.25** | 2026-07-08 → 2026-11-11 (+126d) | 2026-10-08 → 2026-11-29 (+52d) |  |  |
| A39600 | Excavation | 2026-07-08 → 2026-11-11 (+126d) | 2026-07-09 → 2026-11-12 (+126d) |  | 108d → 22.5d |
| A39610 | Pipe Laying | 2026-07-11 → 2026-11-14 (+126d) | 2026-07-19 → 2026-11-22 (+126d) |  | 143d → 47d |
| A39620 | Install Manhole | 2026-07-11 → 2026-11-14 (+126d) | 2026-07-14 → 2026-11-17 (+126d) |  | 149d → 53d |
| A39630 | Testing & Inspection | 2026-07-20 → 2026-11-23 (+126d) | 2026-07-21 → 2026-11-24 (+126d) |  | 143d → 47d |
| A39640 | Backfilling & Compaction | 2026-10-05 → 2026-11-25 (+51d) | 2026-10-08 → 2026-11-29 (+52d) |  | 79d → 47d |
| MH-2.25 / MH-2.26 | **MH-2.25 / MH-2.26** | 2026-07-11 → 2026-11-14 (+126d) | 2026-10-13 → 2026-12-03 (+51d) |  |  |
| A39650 | Excavation | 2026-07-11 → 2026-11-14 (+126d) | 2026-07-12 → 2026-11-15 (+126d) |  | 108d → 22.5d |
| A39660 | Pipe Laying | 2026-07-13 → 2026-11-16 (+126d) | 2026-07-21 → 2026-11-24 (+126d) |  | 145d → 49d |
| A39670 | Install Manhole | 2026-07-13 → 2026-11-16 (+126d) | 2026-07-16 → 2026-11-19 (+126d) |  | 151d → 55d |
| A39680 | Testing & Inspection | 2026-07-22 → 2026-11-25 (+126d) | 2026-07-23 → 2026-11-26 (+126d) |  | 145d → 49d |
| A39690 | Backfilling & Compaction | 2026-10-10 → 2026-11-30 (+51d) | 2026-10-13 → 2026-12-03 (+51d) |  | 79d → 47d |
| MH-2.8.7 / MH-2.8.8 | **MH-2.8.7 / MH-2.8.8** | 2026-07-13 → 2026-04-04 (-100d) | 2026-10-18 → 2026-11-17 (+30d) |  |  |
| A39700 | Excavation | 2026-07-13 → 2026-04-04 A (-100d) | 2026-07-14 → 2026-05-05 A (-70d) | 0% → 100% | 108d → none |
| A39710 | Pipe Laying | 2026-07-15 → 2026-04-04 A (-102d) | 2026-07-23 → 2026-05-05 A (-79d) | 0% → 100% | 147d → none |
| A39720 | Install Manhole | 2026-07-15 → 2026-04-04 A (-102d) | 2026-07-19 → 2026-05-05 A (-75d) | 0% → 100% | 153d → none |
| A39740 | Backfilling & Compaction | 2026-10-14 → 2026-04-04 A (-193d) | 2026-10-18 → 2026-05-05 A (-166d) | 0% → 100% | 79d → none |

| ID | Task | Start | Finish | Complete | Total float |
| --- | --- | --- | --- | --- | --- |
| A39730 | Testing & Inspection | 2026-07-25 → 2026-11-16 (+114d) | 2026-07-26 → 2026-11-17 (+114d) |  | 147d → 61d |
| LR 02 | **LR 02** | 2026-05-05 → 2026-04-04 (-31d) | 2026-10-17 → 2026-11-14 (+28d) |  |  |
| MH-1.7.0 / MH-1.7.1 | **MH-1.7.0 / MH-1.7.1** | 2026-05-05 → 2026-04-04 (-31d) | 2026-05-25 → 2026-10-17 (+145d) |  |  |
| A39750 | Excavation | 2026-05-05 → 2026-04-04 A (-31d) | 2026-05-09 → 2026-05-05 A (-4d) | 0% → 100% | 35d → none |
| A39760 | Pipe Laying | 2026-05-10 → 2026-04-04 A (-36d) | 2026-05-18 → 2026-05-05 A (-13d) | 0% → 100% | 80d → none |
| A39770 | Install Manhole | 2026-05-10 → 2026-04-04 A (-36d) | 2026-05-13 → 2026-05-05 A (-8d) | 0% → 100% | 86d → none |
| A39790 | Backfilling & Compaction | 2026-05-21 → 2026-04-04 A (-47d) | 2026-05-25 → 2026-05-05 A (-20d) | 0% → 100% | 80d → none |
| A39780 | Testing & Inspection | 2026-05-19 → 2026-10-14 (+148d) | 2026-05-20 → 2026-10-17 (+150d) |  | 80d → 64.86d |
| MH-1.7.1 / MH-1.7.2 | **MH-1.7.1 / MH-1.7.2** | 2026-05-10 → 2026-04-04 (-36d) | 2026-05-30 → 2026-10-17 (+140d) |  |  |
| A39800 | Excavation | 2026-05-10 → 2026-04-04 A (-36d) | 2026-05-13 → 2026-05-05 A (-8d) | 0% → 100% | 35d → none |
| A39810 | Pipe Laying | 2026-05-14 → 2026-04-04 A (-40d) | 2026-05-23 → 2026-05-05 A (-18d) | 0% → 100% | 80d → none |
| A39820 | Install Manhole | 2026-05-14 → 2026-04-04 A (-40d) | 2026-05-18 → 2026-05-05 A (-13d) | 0% → 100% | 86d → none |
| A39840 | Backfilling & Compaction | 2026-05-26 → 2026-04-04 A (-52d) | 2026-05-30 → 2026-05-05 A (-25d) | 0% → 100% | 80d → none |
| A39830 | Testing & Inspection | 2026-05-24 → 2026-10-14 (+143d) | 2026-05-25 → 2026-10-17 (+145d) |  | 80d → 64.86d |
| MH-1.7.1.0 / MH-1.7.1.1 | **MH-1.7.1.0 / MH-1.7.1.1** | 2026-05-14 → 2026-04-04 (-40d) | 2026-06-03 → 2026-10-17 (+136d) |  |  |
| A39850 | Excavation | 2026-05-14 → 2026-04-04 A (-40d) | 2026-05-18 → 2026-05-05 A (-13d) | 0% → 100% | 35d → none |
| A39860 | Pipe Laying | 2026-05-19 → 2026-04-04 A (-45d) | 2026-05-27 → 2026-05-05 A (-22d) | 0% → 100% | 80d → none |
| A39870 | Install Manhole | 2026-05-19 → 2026-04-04 A (-45d) | 2026-05-23 → 2026-05-05 A (-18d) | 0% → 100% | 86d → none |
| A39890 | Backfilling & Compaction | 2026-05-31 → 2026-04-04 A (-57d) | 2026-06-03 → 2026-05-05 A (-29d) | 0% → 100% | 80d → none |
| A39880 | Testing & Inspection | 2026-05-28 → 2026-10-14 (+139d) | 2026-05-30 → 2026-10-17 (+140d) |  | 80d → 64.86d |
| MH-1.7.10 / MH-1.7.11 | **MH-1.7.10 / MH-1.7.11** | 2026-05-19 → 2026-04-04 (-45d) | 2026-06-08 → 2026-10-17 (+131d) |  |  |
| A39900 | Excavation | 2026-05-19 → 2026-04-04 A (-45d) | 2026-05-23 → 2026-05-05 A (-18d) | 0% → 100% | 35d → none |
| A39910 | Pipe Laying | 2026-05-24 → 2026-04-04 A (-50d) | 2026-06-01 → 2026-05-05 A (-27d) | 0% → 100% | 80d → none |
| A39920 | Install Manhole | 2026-05-24 → 2026-04-04 A (-50d) | 2026-05-27 → 2026-05-05 A (-22d) | 0% → 100% | 86d → none |
| A39940 | Backfilling & Compaction | 2026-06-04 → 2026-04-04 A (-61d) | 2026-06-08 → 2026-05-05 A (-34d) | 0% → 100% | 80d → none |
| A39930 | Testing & Inspection | 2026-06-02 → 2026-10-14 (+134d) | 2026-06-03 → 2026-10-17 (+136d) |  | 80d → 64.86d |
| MH-1.7.10.0 / MH-1.7.10.1 | **MH-1.7.10.0 / MH-1.7.10.1** | 2026-05-24 → 2026-04-04 (-50d) | 2026-06-13 → 2026-10-17 (+126d) |  |  |
| A39950 | Excavation | 2026-05-24 → 2026-04-04 A (-50d) | 2026-05-27 → 2026-05-05 A (-22d) | 0% → 100% | 35d → none |
| A39960 | Pipe Laying | 2026-05-28 → 2026-04-04 A (-54d) | 2026-06-06 → 2026-05-05 A (-32d) | 0% → 100% | 80d → none |
| A39970 | Install Manhole | 2026-05-28 → 2026-04-04 A (-54d) | 2026-06-01 → 2026-05-05 A (-27d) | 0% → 100% | 86d → none |
| A39990 | Backfilling & Compaction | 2026-06-09 → 2026-04-04 A (-66d) | 2026-06-13 → 2026-05-05 A (-39d) | 0% → 100% | 80d → none |
| A39980 | Testing & Inspection | 2026-06-07 → 2026-10-14 (+129d) | 2026-06-08 → 2026-10-17 (+131d) |  | 80d → 64.86d |
| MH-1.7.11 / MH-1.7.12 | **MH-1.7.11 / MH-1.7.12** | 2026-05-28 → 2026-04-04 (-54d) | 2026-06-17 → 2026-10-17 (+122d) |  |  |
| A40000 | Excavation | 2026-05-28 → 2026-04-04 A (-54d) | 2026-06-01 → 2026-05-05 A (-27d) | 0% → 100% | 35d → none |
| A40010 | Pipe Laying | 2026-06-02 → 2026-04-04 A (-59d) | 2026-06-10 → 2026-05-05 A (-36d) | 0% → 100% | 80d → none |
| A40020 | Install Manhole | 2026-06-02 → 2026-04-04 A (-59d) | 2026-06-06 → 2026-05-05 A (-32d) | 0% → 100% | 86d → none |
| A40040 | Backfilling & Compaction | 2026-06-14 → 2026-04-04 A (-71d) | 2026-06-17 → 2026-05-05 A (-43d) | 0% → 100% | 80d → none |
| A40030 | Testing & Inspection | 2026-06-11 → 2026-10-14 (+125d) | 2026-06-13 → 2026-10-17 (+126d) |  | 80d → 64.86d |
| MH-1.7.2 / MH-1.7.3 | **MH-1.7.2 / MH-1.7.3** | 2026-06-02 → 2026-04-04 (-59d) | 2026-06-22 → 2026-10-17 (+117d) |  |  |
| A40050 | Excavation | 2026-06-02 → 2026-04-04 A (-59d) | 2026-06-06 → 2026-05-05 A (-32d) | 0% → 100% | 35d → none |
| A40060 | Pipe Laying | 2026-06-07 → 2026-04-04 A (-64d) | 2026-06-15 → 2026-05-05 A (-41d) | 0% → 100% | 80d → none |
| A40070 | Install Manhole | 2026-06-07 → 2026-04-04 A (-64d) | 2026-06-10 → 2026-05-05 A (-36d) | 0% → 100% | 86d → none |
| A40090 | Backfilling & Compaction | 2026-06-18 → 2026-04-04 A (-75d) | 2026-06-22 → 2026-05-05 A (-48d) | 0% → 100% | 80d → none |
| A40080 | Testing & Inspection | 2026-06-16 → 2026-10-14 (+120d) | 2026-06-17 → 2026-10-17 (+122d) |  | 80d → 64.86d |
| MH-1.7.2.0 / MH-1.7.2.1 | **MH-1.7.2.0 / MH-1.7.2.1** | 2026-06-07 → 2026-04-04 (-64d) | 2026-06-27 → 2026-10-17 (+112d) |  |  |
| A40100 | Excavation | 2026-06-07 → 2026-04-04 A (-64d) | 2026-06-10 → 2026-05-05 A (-36d) | 0% → 100% | 35d → none |
| A40110 | Pipe Laying | 2026-06-11 → 2026-04-04 A (-68d) | 2026-06-20 → 2026-05-05 A (-46d) | 0% → 100% | 80d → none |
| A40120 | Install Manhole | 2026-06-11 → 2026-04-04 A (-68d) | 2026-06-15 → 2026-05-05 A (-41d) | 0% → 100% | 86d → none |
| A40140 | Backfilling & Compaction | 2026-06-23 → 2026-04-04 A (-80d) | 2026-06-27 → 2026-05-05 A (-53d) | 0% → 100% | 80d → none |
| A40130 | Testing & Inspection | 2026-06-21 → 2026-10-14 (+115d) | 2026-06-22 → 2026-10-17 (+117d) |  | 80d → 64.86d |
| MH-1.7.3 / MH-1.7.4 | **MH-1.7.3 / MH-1.7.4** | 2026-06-11 → 2026-04-04 (-68d) | 2026-07-01 → 2026-10-17 (+108d) |  |  |
| A40150 | Excavation | 2026-06-11 → 2026-04-04 A (-68d) | 2026-06-15 → 2026-05-05 A (-41d) | 0% → 100% | 35d → none |
| A40160 | Pipe Laying | 2026-06-16 → 2026-04-04 A (-73d) | 2026-06-24 → 2026-05-05 A (-50d) | 0% → 100% | 80d → none |
| A40170 | Install Manhole | 2026-06-16 → 2026-04-04 A (-73d) | 2026-06-20 → 2026-05-05 A (-46d) | 0% → 100% | 86d → none |
| A40190 | Backfilling & Compaction | 2026-06-28 → 2026-04-04 A (-85d) | 2026-07-01 → 2026-05-05 A (-57d) | 0% → 100% | 80d → none |
| A40180 | Testing & Inspection | 2026-06-25 → 2026-10-14 (+111d) | 2026-06-27 → 2026-10-17 (+112d) |  | 80d → 64.86d |
| MH-1.7.3.0 / MH-1.7.3.1 | **MH-1.7.3.0 / MH-1.7.3.1** | 2026-06-16 → 2026-04-04 (-73d) | 2026-07-06 → 2026-10-17 (+103d) |  |  |
| A40200 | Excavation | 2026-06-16 → 2026-04-04 A (-73d) | 2026-06-20 → 2026-05-05 A (-46d) | 0% → 100% | 35d → none |
| A40210 | Pipe Laying | 2026-06-21 → 2026-04-04 A (-78d) | 2026-06-29 → 2026-05-05 A (-55d) | 0% → 100% | 80d → none |
| A40220 | Install Manhole | 2026-06-21 → 2026-04-04 A (-78d) | 2026-06-24 → 2026-05-05 A (-50d) | 0% → 100% | 86d → none |
| A40240 | Backfilling & Compaction | 2026-07-02 → 2026-04-04 A (-89d) | 2026-07-06 → 2026-05-05 A (-62d) | 0% → 100% | 80d → none |
| A40230 | Testing & Inspection | 2026-06-30 → 2026-10-14 (+106d) | 2026-07-01 → 2026-10-17 (+108d) |  | 80d → 64.86d |
| MH-1.7.4 / MH-1.7.5 | **MH-1.7.4 / MH-1.7.5** | 2026-06-21 → 2026-04-04 (-78d) | 2026-07-11 → 2026-10-17 (+98d) |  |  |
| A40250 | Excavation | 2026-06-21 → 2026-04-04 A (-78d) | 2026-06-24 → 2026-05-05 A (-50d) | 0% → 100% | 35d → none |
| A40260 | Pipe Laying | 2026-06-25 → 2026-04-04 A (-82d) | 2026-07-04 → 2026-05-05 A (-60d) | 0% → 100% | 80d → none |
| A40270 | Install Manhole | 2026-06-25 → 2026-04-04 A (-82d) | 2026-06-29 → 2026-05-05 A (-55d) | 0% → 100% | 86d → none |
| A40290 | Backfilling & Compaction | 2026-07-07 → 2026-04-04 A (-94d) | 2026-07-11 → 2026-05-05 A (-67d) | 0% → 100% | 80d → none |
| A40280 | Testing & Inspection | 2026-07-05 → 2026-10-14 (+101d) | 2026-07-06 → 2026-10-17 (+103d) |  | 80d → 64.86d |
| MH-1.7.4.0 / MH-1.7.4.1 | **MH-1.7.4.0 / MH-1.7.4.1** | 2026-06-25 → 2026-04-04 (-82d) | 2026-07-15 → 2026-10-17 (+94d) |  |  |
| A40300 | Excavation | 2026-06-25 → 2026-04-04 A (-82d) | 2026-06-29 → 2026-05-05 A (-55d) | 0% → 100% | 35d → none |

| ID | Task | Start | Finish | Complete | Total float |
| --- | --- | --- | --- | --- | --- |
| A40310 | Pipe Laying | 2026-06-30 → 2026-04-04 A (-87d) | 2026-07-08 → 2026-05-05 A (-64d) | 0% → 100% | 80d → none |
| A40320 | Install Manhole | 2026-06-30 → 2026-04-04 A (-87d) | 2026-07-04 → 2026-05-05 A (-60d) | 0% → 100% | 86d → none |
| A40340 | Backfilling & Compaction | 2026-07-12 → 2026-04-04 A (-99d) | 2026-07-15 → 2026-05-05 A (-71d) | 0% → 100% | 80d → none |
| A40330 | Testing & Inspection | 2026-07-09 → 2026-10-14 (+97d) | 2026-07-11 → 2026-10-17 (+98d) |  | 80d → 64.86d |
| MH-1.7.5 / MH-1.7.6 | **MH-1.7.5 / MH-1.7.6** | 2026-06-30 → 2026-04-04 (-87d) | 2026-07-20 → 2026-10-17 (+89d) |  |  |
| A40350 | Excavation | 2026-06-30 → 2026-04-04 A (-87d) | 2026-07-04 → 2026-05-05 A (-60d) | 0% → 100% | 35d → none |
| A40360 | Pipe Laying | 2026-07-05 → 2026-04-04 A (-92d) | 2026-07-08 → 2026-05-05 A (-64d) | 0% → 100% | 84d → none |
| A40370 | Install Manhole | 2026-07-05 → 2026-05-04 A (-62d) | 2026-07-08 → 2026-06-05 A (-33d) | 0% → 100% | 86d → none |
| A40390 | Backfilling & Compaction | 2026-07-16 → 2026-05-04 A (-73d) | 2026-07-20 → 2026-06-05 A (-45d) | 0% → 100% | 80d → none |
| A40380 | Testing & Inspection | 2026-07-09 → 2026-10-14 (+97d) | 2026-07-11 → 2026-10-17 (+98d) |  | 84d → 64.86d |
| MH-1.7.5.0 / MH-1.7.5.1 | **MH-1.7.5.0 / MH-1.7.5.1** | 2026-07-05 → 2026-05-04 (-62d) | 2026-07-25 → 2026-10-17 (+84d) |  |  |
| A40400 | Excavation | 2026-07-05 → 2026-05-04 A (-62d) | 2026-07-08 → 2026-06-05 A (-33d) | 0% → 100% | 35d → none |
| A40410 | Pipe Laying | 2026-07-09 → 2026-05-04 A (-66d) | 2026-07-18 → 2026-06-05 A (-43d) | 0% → 100% | 80d → none |
| A40420 | Install Manhole | 2026-07-09 → 2026-05-04 A (-66d) | 2026-07-13 → 2026-06-05 A (-38d) | 0% → 100% | 86d → none |
| A40440 | Backfilling & Compaction | 2026-07-21 → 2026-05-04 A (-78d) | 2026-07-25 → 2026-06-05 A (-50d) | 0% → 100% | 80d → none |
| A40430 | Testing & Inspection | 2026-07-19 → 2026-10-14 (+87d) | 2026-07-20 → 2026-10-17 (+89d) |  | 80d → 64.86d |
| MH-1.7.6 / MH-1.7.7 | **MH-1.7.6 / MH-1.7.7** | 2026-07-09 → 2026-05-04 (-66d) | 2026-07-29 → 2026-10-17 (+80d) |  |  |
| A40450 | Excavation | 2026-07-09 → 2026-05-04 A (-66d) | 2026-07-13 → 2026-06-05 A (-38d) | 0% → 100% | 35d → none |
| A40460 | Pipe Laying | 2026-07-14 → 2026-05-04 A (-71d) | 2026-07-22 → 2026-06-05 A (-47d) | 0% → 100% | 80d → none |
| A40470 | Install Manhole | 2026-07-14 → 2026-05-04 A (-71d) | 2026-07-18 → 2026-06-05 A (-43d) | 0% → 100% | 86d → none |
| A40490 | Backfilling & Compaction | 2026-07-26 → 2026-05-04 A (-83d) | 2026-07-29 → 2026-06-05 A (-54d) | 0% → 100% | 80d → none |
| A40480 | Testing & Inspection | 2026-07-23 → 2026-10-14 (+83d) | 2026-07-25 → 2026-10-17 (+84d) |  | 80d → 64.86d |
| MH-1.7.6.0 / MH-1.7.6.1 | **MH-1.7.6.0 / MH-1.7.6.1** | 2026-07-14 → 2026-05-04 (-71d) | 2026-08-03 → 2026-10-17 (+75d) |  |  |
| A40500 | Excavation | 2026-07-14 → 2026-05-04 A (-71d) | 2026-07-18 → 2026-06-05 A (-43d) | 0% → 100% | 35d → none |
| A40510 | Pipe Laying | 2026-07-19 → 2026-05-04 A (-76d) | 2026-07-27 → 2026-06-05 A (-52d) | 0% → 100% | 80d → none |
| A40520 | Install Manhole | 2026-07-19 → 2026-05-04 A (-76d) | 2026-07-22 → 2026-06-05 A (-47d) | 0% → 100% | 86d → none |
| A40540 | Backfilling & Compaction | 2026-07-30 → 2026-05-04 A (-87d) | 2026-08-03 → 2026-06-05 A (-59d) | 0% → 100% | 80d → none |
| A40530 | Testing & Inspection | 2026-07-28 → 2026-10-14 (+78d) | 2026-07-29 → 2026-10-17 (+80d) |  | 80d → 64.86d |
| MH-1.7.7 / MH-1.7.8 | **MH-1.7.7 / MH-1.7.8** | 2026-07-19 → 2026-05-04 (-76d) | 2026-08-08 → 2026-10-17 (+70d) |  |  |
| A40550 | Excavation | 2026-07-19 → 2026-05-04 A (-76d) | 2026-07-22 → 2026-06-05 A (-47d) | 0% → 100% | 35d → none |
| A40560 | Pipe Laying | 2026-07-23 → 2026-05-04 A (-80d) | 2026-08-01 → 2026-06-05 A (-57d) | 0% → 100% | 80d → none |
| A40570 | Install Manhole | 2026-07-23 → 2026-05-04 A (-80d) | 2026-07-27 → 2026-06-05 A (-52d) | 0% → 100% | 86d → none |
| A40590 | Backfilling & Compaction | 2026-08-04 → 2026-05-04 A (-92d) | 2026-08-08 → 2026-06-05 A (-64d) | 0% → 100% | 80d → none |
| A40580 | Testing & Inspection | 2026-08-02 → 2026-10-14 (+73d) | 2026-08-03 → 2026-10-17 (+75d) |  | 80d → 64.86d |
| MH-1.7.7.0 / MH-1.7.7.1 | **MH-1.7.7.0 / MH-1.7.7.1** | 2026-07-23 → 2026-05-04 (-80d) | 2026-08-12 → 2026-10-17 (+66d) |  |  |
| A40600 | Excavation | 2026-07-23 → 2026-05-04 A (-80d) | 2026-07-27 → 2026-06-05 A (-52d) | 0% → 100% | 35d → none |
| A40610 | Pipe Laying | 2026-07-28 → 2026-05-04 A (-85d) | 2026-08-05 → 2026-06-05 A (-61d) | 0% → 100% | 80d → none |
| A40620 | Install Manhole | 2026-07-28 → 2026-05-04 A (-85d) | 2026-08-01 → 2026-06-05 A (-57d) | 0% → 100% | 86d → none |
| A40640 | Backfilling & Compaction | 2026-08-09 → 2026-05-04 A (-97d) | 2026-08-12 → 2026-06-05 A (-68d) | 0% → 100% | 80d → none |
| A40630 | Testing & Inspection | 2026-08-06 → 2026-10-14 (+69d) | 2026-08-08 → 2026-10-17 (+70d) |  | 80d → 64.86d |
| MH-1.7.8 / MH-1.7.9 | **MH-1.7.8 / MH-1.7.9** | 2026-07-28 → 2026-05-04 (-85d) | 2026-08-17 → 2026-10-17 (+61d) |  |  |
| A40650 | Excavation | 2026-07-28 → 2026-05-04 A (-85d) | 2026-08-01 → 2026-06-05 A (-57d) | 0% → 100% | 35d → none |
| A40660 | Pipe Laying | 2026-08-02 → 2026-05-04 A (-90d) | 2026-08-10 → 2026-06-05 A (-66d) | 0% → 100% | 80d → none |
| A40670 | Install Manhole | 2026-08-02 → 2026-05-04 A (-90d) | 2026-08-05 → 2026-06-05 A (-61d) | 0% → 100% | 86d → none |
| A40690 | Backfilling & Compaction | 2026-08-13 → 2026-05-04 A (-101d) | 2026-08-17 → 2026-06-05 A (-73d) | 0% → 100% | 80d → none |
| A40680 | Testing & Inspection | 2026-08-11 → 2026-10-14 (+64d) | 2026-08-12 → 2026-10-17 (+66d) |  | 80d → 64.86d |
| MH-1.7.8.0 / MH-1.7.8.1 | **MH-1.7.8.0 / MH-1.7.8.1** | 2026-08-02 → 2026-05-04 (-90d) | 2026-08-22 → 2026-10-17 (+56d) |  |  |
| A40700 | Excavation | 2026-08-02 → 2026-05-04 A (-90d) | 2026-08-05 → 2026-06-05 A (-61d) | 0% → 100% | 35d → none |
| A40710 | Pipe Laying | 2026-08-06 → 2026-05-04 A (-94d) | 2026-08-15 → 2026-06-05 A (-71d) | 0% → 100% | 80d → none |
| A40720 | Install Manhole | 2026-08-06 → 2026-05-04 A (-94d) | 2026-08-10 → 2026-06-05 A (-66d) | 0% → 100% | 86d → none |
| A40740 | Backfilling & Compaction | 2026-08-18 → 2026-05-04 A (-106d) | 2026-08-22 → 2026-06-05 A (-78d) | 0% → 100% | 80d → none |
| A40730 | Testing & Inspection | 2026-08-16 → 2026-10-14 (+59d) | 2026-08-17 → 2026-10-17 (+61d) |  | 80d → 64.86d |
| MH-1.7.9 / MH-1.7.10 | **MH-1.7.9 / MH-1.7.10** | 2026-08-06 → 2026-05-04 (-94d) | 2026-08-26 → 2026-10-17 (+52d) |  |  |
| A40750 | Excavation | 2026-08-06 → 2026-05-04 A (-94d) | 2026-08-10 → 2026-06-05 A (-66d) | 0% → 100% | 35d → none |
| A40760 | Pipe Laying | 2026-08-11 → 2026-05-04 A (-99d) | 2026-08-19 → 2026-06-05 A (-75d) | 0% → 100% | 80d → none |
| A40770 | Install Manhole | 2026-08-11 → 2026-05-04 A (-99d) | 2026-08-15 → 2026-06-05 A (-71d) | 0% → 100% | 86d → none |
| A40790 | Backfilling & Compaction | 2026-08-23 → 2026-05-04 A (-111d) | 2026-08-26 → 2026-06-05 A (-82d) | 0% → 100% | 80d → none |
| A40780 | Testing & Inspection | 2026-08-20 → 2026-10-14 (+55d) | 2026-08-22 → 2026-10-17 (+56d) |  | 80d → 64.86d |
| MH-1.7.9.0 / MH-1.7.9.1 | **MH-1.7.9.0 / MH-1.7.9.1** | 2026-08-11 → 2026-05-04 (-99d) | 2026-08-31 → 2026-10-17 (+47d) |  |  |
| A40800 | Excavation | 2026-08-11 → 2026-05-04 A (-99d) | 2026-08-15 → 2026-06-05 A (-71d) | 0% → 100% | 35d → none |
| A40810 | Pipe Laying | 2026-08-16 → 2026-05-04 A (-104d) | 2026-08-24 → 2026-06-05 A (-80d) | 0% → 100% | 80d → none |
| A40820 | Install Manhole | 2026-08-16 → 2026-05-04 A (-104d) | 2026-08-19 → 2026-06-05 A (-75d) | 0% → 100% | 86d → none |
| A40840 | Backfilling & Compaction | 2026-08-27 → 2026-05-04 A (-115d) | 2026-08-31 → 2026-06-05 A (-87d) | 0% → 100% | 80d → none |
| A40830 | Testing & Inspection | 2026-08-25 → 2026-10-14 (+50d) | 2026-08-26 → 2026-10-17 (+52d) |  | 80d → 64.86d |
| MH-2.19.2 / MH-2.19.3 | **MH-2.19.2 / MH-2.19.3** | 2026-08-16 → 2026-05-04 (-104d) | 2026-09-05 → 2026-10-17 (+42d) |  |  |
| A40850 | Excavation | 2026-08-16 → 2026-05-04 A (-104d) | 2026-08-19 → 2026-06-05 A (-75d) | 0% → 100% | 35d → none |
| A40860 | Pipe Laying | 2026-08-20 → 2026-05-04 A (-108d) | 2026-08-29 → 2026-06-05 A (-85d) | 0% → 100% | 80d → none |
| A40870 | Install Manhole | 2026-08-20 → 2026-05-04 A (-108d) | 2026-08-24 → 2026-06-05 A (-80d) | 0% → 100% | 86d → none |
| A40890 | Backfilling & Compaction | 2026-09-01 → 2026-05-04 A (-120d) | 2026-09-05 → 2026-06-05 A (-92d) | 0% → 100% | 80d → none |
| A40880 | Testing & Inspection | 2026-08-30 → 2026-10-14 (+45d) | 2026-08-31 → 2026-10-17 (+47d) |  | 80d → 64.86d |

| ID | Task | Start | Finish | Complete | Total float |
| --- | --- | --- | --- | --- | --- |
| MH-2.19.3 / MH-2.19.4 | **MH-2.19.3 / MH-2.19.4** | 2026-08-20 → 2026-05-04 (-108d) | 2026-09-09 → 2026-10-17 (+38d) |  |  |
| A40900 | Excavation | 2026-08-20 → 2026-05-04 A (-108d) | 2026-08-24 → 2026-06-05 A (-80d) | 0% → 100% | 35d → none |
| A40910 | Pipe Laying | 2026-08-25 → 2026-05-04 A (-113d) | 2026-09-02 → 2026-06-05 A (-89d) | 0% → 100% | 80d → none |
| A40920 | Install Manhole | 2026-08-25 → 2026-05-04 A (-113d) | 2026-08-29 → 2026-06-05 A (-85d) | 0% → 100% | 86d → none |
| A40940 | Backfilling & Compaction | 2026-09-06 → 2026-05-04 A (-125d) | 2026-09-09 → 2026-06-05 A (-96d) | 0% → 100% | 80d → none |
| A40930 | Testing & Inspection | 2026-09-03 → 2026-10-14 (+41d) | 2026-09-05 → 2026-10-17 (+42d) |  | 80d → 64.86d |
| MH-2.19.3.0 / MH-2.19.3.1 | **MH-2.19.3.0 / MH-2.19.3.1** | 2026-08-25 → 2026-05-04 (-113d) | 2026-09-14 → 2026-10-17 (+33d) |  |  |
| A40950 | Excavation | 2026-08-25 → 2026-05-04 A (-113d) | 2026-08-29 → 2026-06-05 A (-85d) | 0% → 100% | 35d → none |
| A40960 | Pipe Laying | 2026-08-30 → 2026-05-04 A (-118d) | 2026-09-07 → 2026-06-05 A (-94d) | 0% → 100% | 80d → none |
| A40970 | Install Manhole | 2026-08-30 → 2026-05-04 A (-118d) | 2026-09-02 → 2026-06-05 A (-89d) | 0% → 100% | 86d → none |
| A40990 | Backfilling & Compaction | 2026-09-10 → 2026-05-04 A (-129d) | 2026-09-14 → 2026-06-05 A (-101d) | 0% → 100% | 80d → none |
| A40980 | Testing & Inspection | 2026-09-08 → 2026-10-14 (+36d) | 2026-09-09 → 2026-10-17 (+38d) |  | 80d → 64.86d |
| MH-2.19.4 / MH-2.19.5 | **MH-2.19.4 / MH-2.19.5** | 2026-08-30 → 2026-05-04 (-118d) | 2026-09-19 → 2026-10-17 (+28d) |  |  |
| A41000 | Excavation | 2026-08-30 → 2026-05-04 A (-118d) | 2026-09-02 → 2026-06-05 A (-89d) | 0% → 100% | 35d → none |
| A41010 | Pipe Laying | 2026-09-03 → 2026-05-04 A (-122d) | 2026-09-12 → 2026-06-05 A (-99d) | 0% → 100% | 80d → none |
| A41020 | Install Manhole | 2026-09-03 → 2026-05-04 A (-122d) | 2026-09-07 → 2026-06-05 A (-94d) | 0% → 100% | 86d → none |
| A41040 | Backfilling & Compaction | 2026-09-15 → 2026-05-04 A (-134d) | 2026-09-19 → 2026-06-05 A (-106d) | 0% → 100% | 80d → none |
| A41030 | Testing & Inspection | 2026-09-13 → 2026-10-14 (+31d) | 2026-09-14 → 2026-10-17 (+33d) |  | 80d → 64.86d |
| MH-2.19.4.0 / MH-2.19.4.1 | **MH-2.19.4.0 / MH-2.19.4.1** | 2026-09-03 → 2026-05-04 (-122d) | 2026-09-23 → 2026-10-21 (+28d) |  |  |
| A41050 | Excavation | 2026-09-03 → 2026-05-04 A (-122d) | 2026-09-07 → 2026-06-05 A (-94d) | 0% → 100% | 35d → none |
| A41060 | Pipe Laying | 2026-09-08 → 2026-08-21 A (-18d) | 2026-09-16 → 2026-10-01 A (+15d) | 0% → 100% | 80d → none |
| A41070 | Install Manhole | 2026-09-08 → 2026-08-21 A (-18d) | 2026-09-12 → 2026-10-01 A (+19d) | 0% → 100% | 86d → none |
| A41080 | Testing & Inspection | 2026-09-17 → 2026-10-14 (+27d) | 2026-09-19 → 2026-10-17 (+28d) |  | 80d → 64.86d |
| A41090 | Backfilling & Compaction | 2026-09-20 → 2026-10-17 (+27d) | 2026-09-23 → 2026-10-21 (+28d) |  | 80d → 64.86d |
| MH-2.19.5 / MH-2.19.6 | **MH-2.19.5 / MH-2.19.6** | 2026-09-08 → 2026-05-04 (-127d) | 2026-09-28 → 2026-10-26 (+28d) |  |  |
| A41100 | Excavation | 2026-09-08 → 2026-05-04 A (-127d) | 2026-09-12 → 2026-06-05 A (-99d) | 0% → 100% | 35d → none |
| A41110 | Pipe Laying | 2026-09-13 → 2026-08-21 A (-23d) | 2026-09-21 → 2026-10-01 A (+10d) | 0% → 100% | 80d → none |
| A41120 | Install Manhole | 2026-09-13 → 2026-08-21 A (-23d) | 2026-09-16 → 2026-10-01 A (+15d) | 0% → 100% | 86d → none |
| A41130 | Testing & Inspection | 2026-09-22 → 2026-10-14 (+22d) | 2026-09-23 → 2026-10-17 (+24d) |  | 80d → 68.86d |
| A41140 | Backfilling & Compaction | 2026-09-24 → 2026-10-21 (+27d) | 2026-09-28 → 2026-10-26 (+28d) |  | 80d → 64.86d |
| MH-2.19.5.0 / MH-2.19.5.1 | **MH-2.19.5.0 / MH-2.19.5.1** | 2026-09-13 → 2026-05-04 (-132d) | 2026-10-03 → 2026-10-31 (+28d) |  |  |
| A41150 | Excavation | 2026-09-13 → 2026-05-04 A (-132d) | 2026-09-16 → 2026-06-05 A (-103d) | 0% → 100% | 35d → none |
| A41160 | Pipe Laying | 2026-09-17 → 2026-08-21 A (-27d) | 2026-09-26 → 2026-10-01 A (+5d) | 0% → 100% | 80d → none |
| A41170 | Install Manhole | 2026-09-17 → 2026-08-21 A (-27d) | 2026-09-21 → 2026-10-01 A (+10d) | 0% → 100% | 86d → none |
| A41180 | Testing & Inspection | 2026-09-27 → 2026-10-14 (+17d) | 2026-09-28 → 2026-10-17 (+19d) |  | 80d → 72.86d |
| A41190 | Backfilling & Compaction | 2026-09-29 → 2026-10-26 (+27d) | 2026-10-03 → 2026-10-31 (+28d) |  | 80d → 64.86d |
| MH-2.19.6 / MH-2.19.7 | **MH-2.19.6 / MH-2.19.7** | 2026-09-17 → 2026-05-04 (-136d) | 2026-10-07 → 2026-11-04 (+28d) |  |  |
| A41200 | Excavation | 2026-09-17 → 2026-05-04 A (-136d) | 2026-09-21 → 2026-06-05 A (-108d) | 0% → 100% | 35d → none |
| A41210 | Pipe Laying | 2026-09-22 → 2026-08-21 A (-32d) | 2026-09-30 → 2026-10-01 A (+1d) | 0% → 100% | 80d → none |
| A41220 | Install Manhole | 2026-09-22 → 2026-08-21 A (-32d) | 2026-09-26 → 2026-10-01 A (+5d) | 0% → 100% | 86d → none |
| A41230 | Testing & Inspection | 2026-10-01 → 2026-10-14 (+13d) | 2026-10-03 → 2026-10-17 (+14d) |  | 80d → 76.86d |
| A41240 | Backfilling & Compaction | 2026-10-04 → 2026-10-31 (+27d) | 2026-10-07 → 2026-11-04 (+28d) |  | 80d → 64.86d |
| MH-2.19.6.0 / MH-2.19.6.1 | **MH-2.19.6.0 / MH-2.19.6.1** | 2026-09-22 → 2026-05-04 (-141d) | 2026-10-12 → 2026-11-09 (+28d) |  |  |
| A41250 | Excavation | 2026-09-22 → 2026-05-04 A (-141d) | 2026-09-26 → 2026-06-05 A (-113d) | 0% → 100% | 35d → none |
| A41260 | Pipe Laying | 2026-09-27 → 2026-08-21 A (-37d) | 2026-10-05 → 2026-10-01 A (-4d) | 0% → 100% | 80d → none |
| A41270 | Install Manhole | 2026-09-27 → 2026-08-21 A (-37d) | 2026-09-30 → 2026-10-01 A (+1d) | 0% → 100% | 86d → none |
| A41280 | Testing & Inspection | 2026-10-06 → 2026-10-14 (+8d) | 2026-10-07 → 2026-10-17 (+10d) |  | 80d → 80.86d |
| A41290 | Backfilling & Compaction | 2026-10-08 → 2026-11-04 (+27d) | 2026-10-12 → 2026-11-09 (+28d) |  | 80d → 64.86d |
| MH-2.19.7 / MH-2.19.8 | **MH-2.19.7 / MH-2.19.8** | 2026-09-27 → 2026-05-04 (-146d) | 2026-10-17 → 2026-11-14 (+28d) |  |  |
| A41300 | Excavation | 2026-09-27 → 2026-05-04 A (-146d) | 2026-09-30 → 2026-06-05 A (-117d) | 0% → 100% | 35d → none |
| A41310 | Pipe Laying | 2026-10-01 → 2026-08-21 A (-41d) | 2026-10-10 → 2026-10-01 A (-9d) | 0% → 100% | 80d → none |
| A41320 | Install Manhole | 2026-10-01 → 2026-08-21 A (-41d) | 2026-10-05 → 2026-10-01 A (-4d) | 0% → 100% | 86d → none |
| A41330 | Testing & Inspection | 2026-10-11 → 2026-10-14 (+3d) | 2026-10-12 → 2026-10-17 (+5d) |  | 80d → 84.86d |
| A41340 | Backfilling & Compaction | 2026-10-13 → 2026-11-09 (+27d) | 2026-10-17 → 2026-11-14 (+28d) |  | 80d → 64.86d |
| LR 03 | **LR 03** | 2026-10-04 → 2026-05-04 (-153d) | 2026-11-24 → 2026-07-05 (-142d) |  |  |
| MH-1.10.10 / MH-1.10.11 | **MH-1.10.10 / MH-1.10.11** | 2026-10-04 → 2026-05-04 (-153d) | 2026-10-07 → 2026-06-05 (-124d) |  |  |
| A41350 | Excavation | 2026-10-04 → 2026-05-04 A (-153d) | 2026-10-04 → 2026-06-05 A (-121d) | 0% → 100% | 5d → none |
| A41360 | Pipe Laying | 2026-10-05 → 2026-05-04 A (-154d) | 2026-10-05 → 2026-06-05 A (-122d) | 0% → 100% | 5d → none |
| A41370 | Install Manhole | 2026-10-05 → 2026-05-04 A (-154d) | 2026-10-05 → 2026-06-05 A (-122d) | 0% → 100% | 6d → none |
| A41380 | Testing & Inspection | 2026-10-06 → 2026-05-04 A (-155d) | 2026-10-06 → 2026-06-05 A (-123d) | 0% → 100% | 5d → none |
| A41390 | Backfilling & Compaction | 2026-10-07 → 2026-05-04 A (-156d) | 2026-10-07 → 2026-06-05 A (-124d) | 0% → 100% | 5d → none |
| MH-1.10.11 / MH-1.10.12 | **MH-1.10.11 / MH-1.10.12** | 2026-10-05 → 2026-05-04 (-154d) | 2026-10-08 → 2026-06-05 (-125d) |  |  |
| A41400 | Excavation | 2026-10-05 → 2026-05-04 A (-154d) | 2026-10-05 → 2026-06-05 A (-122d) | 0% → 100% | 5d → none |
| A41410 | Pipe Laying | 2026-10-06 → 2026-05-04 A (-155d) | 2026-10-06 → 2026-06-05 A (-123d) | 0% → 100% | 5d → none |
| A41420 | Install Manhole | 2026-10-06 → 2026-05-04 A (-155d) | 2026-10-06 → 2026-06-05 A (-123d) | 0% → 100% | 6d → none |
| A41430 | Testing & Inspection | 2026-10-07 → 2026-05-04 A (-156d) | 2026-10-07 → 2026-06-05 A (-124d) | 0% → 100% | 5d → none |
| A41440 | Backfilling & Compaction | 2026-10-08 → 2026-05-04 A (-157d) | 2026-10-08 → 2026-06-05 A (-125d) | 0% → 100% | 5d → none |
| MH-1.10.11.0 / MH-1.10.11.1 | **MH-1.10.11.0 / MH-1.10.11.1** | 2026-10-06 → 2026-05-04 (-155d) | 2026-10-10 → 2026-06-05 (-127d) |  |  |
| A41450 | Excavation | 2026-10-06 → 2026-05-04 A (-155d) | 2026-10-06 → 2026-06-05 A (-123d) | 0% → 100% | 5d → none |
| A41460 | Pipe Laying | 2026-10-07 → 2026-05-04 A (-156d) | 2026-10-07 → 2026-06-05 A (-124d) | 0% → 100% | 5d → none |

| ID | Task | Start | Finish | Complete | Total float |
| --- | --- | --- | --- | --- | --- |
| A41470 | Install Manhole | 2026-10-07 → 2026-05-04 A (-156d) | 2026-10-07 → 2026-06-05 A (-124d) | 0% → 100% | 6d → none |
| A41480 | Testing & Inspection | 2026-10-08 → 2026-05-04 A (-157d) | 2026-10-08 → 2026-06-05 A (-125d) | 0% → 100% | 5d → none |
| A41490 | Backfilling & Compaction | 2026-10-10 → 2026-05-04 A (-159d) | 2026-10-10 → 2026-06-05 A (-127d) | 0% → 100% | 5d → none |
| MH-1.10.12 / MH-1.10.13 | **MH-1.10.12 / MH-1.10.13** | 2026-10-07 → 2026-05-04 (-156d) | 2026-10-11 → 2026-06-05 (-128d) |  |  |
| A41500 | Excavation | 2026-10-07 → 2026-05-04 A (-156d) | 2026-10-07 → 2026-06-05 A (-124d) | 0% → 100% | 5d → none |
| A41510 | Pipe Laying | 2026-10-08 → 2026-05-04 A (-157d) | 2026-10-08 → 2026-06-05 A (-125d) | 0% → 100% | 5d → none |
| A41520 | Install Manhole | 2026-10-08 → 2026-05-04 A (-157d) | 2026-10-08 → 2026-06-05 A (-125d) | 0% → 100% | 6d → none |
| A41530 | Testing & Inspection | 2026-10-10 → 2026-05-04 A (-159d) | 2026-10-10 → 2026-06-05 A (-127d) | 0% → 100% | 5d → none |
| A41540 | Backfilling & Compaction | 2026-10-11 → 2026-05-04 A (-160d) | 2026-10-11 → 2026-06-05 A (-128d) | 0% → 100% | 5d → none |
| MH-1.10.9 / MH-1.10.10 | **MH-1.10.9 / MH-1.10.10** | 2026-10-08 → 2026-05-04 (-157d) | 2026-10-12 → 2026-06-05 (-129d) |  |  |
| A41550 | Excavation | 2026-10-08 → 2026-05-04 A (-157d) | 2026-10-08 → 2026-06-05 A (-125d) | 0% → 100% | 5d → none |
| A41560 | Pipe Laying | 2026-10-10 → 2026-05-04 A (-159d) | 2026-10-10 → 2026-06-05 A (-127d) | 0% → 100% | 5d → none |
| A41570 | Install Manhole | 2026-10-10 → 2026-05-04 A (-159d) | 2026-10-10 → 2026-06-05 A (-127d) | 0% → 100% | 6d → none |
| A41580 | Testing & Inspection | 2026-10-11 → 2026-05-04 A (-160d) | 2026-10-11 → 2026-06-05 A (-128d) | 0% → 100% | 5d → none |
| A41590 | Backfilling & Compaction | 2026-10-12 → 2026-05-04 A (-161d) | 2026-10-12 → 2026-06-05 A (-129d) | 0% → 100% | 5d → none |
| MH-1.22 / MH-1.22.1 | **MH-1.22 / MH-1.22.1** | 2026-10-10 → 2026-05-04 (-159d) | 2026-10-13 → 2026-06-05 (-130d) |  |  |
| A41600 | Excavation | 2026-10-10 → 2026-05-04 A (-159d) | 2026-10-10 → 2026-06-05 A (-127d) | 0% → 100% | 5d → none |
| A41610 | Pipe Laying | 2026-10-11 → 2026-05-04 A (-160d) | 2026-10-11 → 2026-06-05 A (-128d) | 0% → 100% | 5d → none |
| A41620 | Install Manhole | 2026-10-11 → 2026-05-04 A (-160d) | 2026-10-11 → 2026-06-05 A (-128d) | 0% → 100% | 6d → none |
| A41630 | Testing & Inspection | 2026-10-12 → 2026-05-04 A (-161d) | 2026-10-12 → 2026-06-05 A (-129d) | 0% → 100% | 5d → none |
| A41640 | Backfilling & Compaction | 2026-10-13 → 2026-05-04 A (-162d) | 2026-10-13 → 2026-06-05 A (-130d) | 0% → 100% | 5d → none |
| MH-1.22 / MH-1.23 | **MH-1.22 / MH-1.23** | 2026-10-11 → 2026-05-04 (-160d) | 2026-10-14 → 2026-06-05 (-131d) |  |  |
| A41650 | Excavation | 2026-10-11 → 2026-05-04 A (-160d) | 2026-10-11 → 2026-06-05 A (-128d) | 0% → 100% | 5d → none |
| A41660 | Pipe Laying | 2026-10-12 → 2026-05-04 A (-161d) | 2026-10-12 → 2026-06-05 A (-129d) | 0% → 100% | 5d → none |
| A41670 | Install Manhole | 2026-10-12 → 2026-05-04 A (-161d) | 2026-10-12 → 2026-06-05 A (-129d) | 0% → 100% | 6d → none |
| A41680 | Testing & Inspection | 2026-10-13 → 2026-05-04 A (-162d) | 2026-10-13 → 2026-06-05 A (-130d) | 0% → 100% | 5d → none |
| A41690 | Backfilling & Compaction | 2026-10-14 → 2026-05-04 A (-163d) | 2026-10-14 → 2026-06-05 A (-131d) | 0% → 100% | 5d → none |
| MH-1.23 / MH-1.24 | **MH-1.23 / MH-1.24** | 2026-10-12 → 2026-05-04 (-161d) | 2026-10-15 → 2026-06-05 (-132d) |  |  |
| A41700 | Excavation | 2026-10-12 → 2026-05-04 A (-161d) | 2026-10-12 → 2026-06-05 A (-129d) | 0% → 100% | 5d → none |
| A41710 | Pipe Laying | 2026-10-13 → 2026-05-04 A (-162d) | 2026-10-13 → 2026-06-05 A (-130d) | 0% → 100% | 5d → none |
| A41720 | Install Manhole | 2026-10-13 → 2026-05-04 A (-162d) | 2026-10-13 → 2026-06-05 A (-130d) | 0% → 100% | 6d → none |
| A41730 | Testing & Inspection | 2026-10-14 → 2026-05-04 A (-163d) | 2026-10-14 → 2026-06-05 A (-131d) | 0% → 100% | 5d → none |
| A41740 | Backfilling & Compaction | 2026-10-15 → 2026-05-04 A (-164d) | 2026-10-15 → 2026-06-05 A (-132d) | 0% → 100% | 5d → none |
| MH-2.21.10 / MH-2.21.11 | **MH-2.21.10 / MH-2.21.11** | 2026-10-13 → 2026-05-04 (-162d) | 2026-10-17 → 2026-06-05 (-134d) |  |  |
| A41750 | Excavation | 2026-10-13 → 2026-05-04 A (-162d) | 2026-10-13 → 2026-06-05 A (-130d) | 0% → 100% | 5d → none |
| A41760 | Pipe Laying | 2026-10-14 → 2026-05-04 A (-163d) | 2026-10-14 → 2026-06-05 A (-131d) | 0% → 100% | 5d → none |
| A41770 | Install Manhole | 2026-10-14 → 2026-05-04 A (-163d) | 2026-10-14 → 2026-06-05 A (-131d) | 0% → 100% | 6d → none |
| A41780 | Testing & Inspection | 2026-10-15 → 2026-05-04 A (-164d) | 2026-10-15 → 2026-06-05 A (-132d) | 0% → 100% | 5d → none |
| A41790 | Backfilling & Compaction | 2026-10-17 → 2026-05-04 A (-166d) | 2026-10-17 → 2026-06-05 A (-134d) | 0% → 100% | 5d → none |
| MH-2.21.8 / MH-2.21.9 | **MH-2.21.8 / MH-2.21.9** | 2026-10-14 → 2026-05-04 (-163d) | 2026-10-18 → 2026-06-05 (-135d) |  |  |
| A41800 | Excavation | 2026-10-14 → 2026-05-04 A (-163d) | 2026-10-14 → 2026-06-05 A (-131d) | 0% → 100% | 5d → none |
| A41810 | Pipe Laying | 2026-10-15 → 2026-05-04 A (-164d) | 2026-10-15 → 2026-06-05 A (-132d) | 0% → 100% | 5d → none |
| A41820 | Install Manhole | 2026-10-15 → 2026-05-04 A (-164d) | 2026-10-15 → 2026-06-05 A (-132d) | 0% → 100% | 6d → none |
| A41830 | Testing & Inspection | 2026-10-17 → 2026-05-04 A (-166d) | 2026-10-17 → 2026-06-05 A (-134d) | 0% → 100% | 5d → none |
| A41840 | Backfilling & Compaction | 2026-10-18 → 2026-05-04 A (-167d) | 2026-10-18 → 2026-06-05 A (-135d) | 0% → 100% | 5d → none |
| MH-2.21.8.0 / MH-2.21.8.1 | **MH-2.21.8.0 / MH-2.21.8.1** | 2026-10-15 → 2026-05-04 (-164d) | 2026-10-19 → 2026-06-05 (-136d) |  |  |
| A41850 | Excavation | 2026-10-15 → 2026-05-04 A (-164d) | 2026-10-15 → 2026-06-05 A (-132d) | 0% → 100% | 5d → none |
| A41860 | Pipe Laying | 2026-10-17 → 2026-05-04 A (-166d) | 2026-10-17 → 2026-06-05 A (-134d) | 0% → 100% | 5d → none |
| A41870 | Install Manhole | 2026-10-17 → 2026-05-04 A (-166d) | 2026-10-17 → 2026-06-05 A (-134d) | 0% → 100% | 6d → none |
| A41880 | Testing & Inspection | 2026-10-18 → 2026-05-04 A (-167d) | 2026-10-18 → 2026-06-05 A (-135d) | 0% → 100% | 5d → none |
| A41890 | Backfilling & Compaction | 2026-10-19 → 2026-05-04 A (-168d) | 2026-10-19 → 2026-06-05 A (-136d) | 0% → 100% | 5d → none |
| MH-2.21.9 / MH-2.21.10 | **MH-2.21.9 / MH-2.21.10** | 2026-10-17 → 2026-05-04 (-166d) | 2026-10-20 → 2026-06-05 (-137d) |  |  |
| A41900 | Excavation | 2026-10-17 → 2026-05-04 A (-166d) | 2026-10-17 → 2026-06-05 A (-134d) | 0% → 100% | 5d → none |
| A41910 | Pipe Laying | 2026-10-18 → 2026-05-04 A (-167d) | 2026-10-18 → 2026-06-05 A (-135d) | 0% → 100% | 5d → none |
| A41920 | Install Manhole | 2026-10-18 → 2026-05-04 A (-167d) | 2026-10-18 → 2026-06-05 A (-135d) | 0% → 100% | 6d → none |
| A41930 | Testing & Inspection | 2026-10-19 → 2026-05-04 A (-168d) | 2026-10-19 → 2026-06-05 A (-136d) | 0% → 100% | 5d → none |
| A41940 | Backfilling & Compaction | 2026-10-20 → 2026-05-04 A (-169d) | 2026-10-20 → 2026-06-05 A (-137d) | 0% → 100% | 5d → none |
| MH-2.21.9.0 / MH-2.21.9.1 | **MH-2.21.9.0 / MH-2.21.9.1** | 2026-10-18 → 2026-05-04 (-167d) | 2026-10-21 → 2026-06-05 (-138d) |  |  |
| A41950 | Excavation | 2026-10-18 → 2026-05-04 A (-167d) | 2026-10-18 → 2026-06-05 A (-135d) | 0% → 100% | 5d → none |
| A41960 | Pipe Laying | 2026-10-19 → 2026-05-04 A (-168d) | 2026-10-19 → 2026-06-05 A (-136d) | 0% → 100% | 5d → none |
| A41970 | Install Manhole | 2026-10-19 → 2026-05-04 A (-168d) | 2026-10-19 → 2026-06-05 A (-136d) | 0% → 100% | 6d → none |
| A41980 | Testing & Inspection | 2026-10-20 → 2026-05-04 A (-169d) | 2026-10-20 → 2026-06-05 A (-137d) | 0% → 100% | 5d → none |
| A41990 | Backfilling & Compaction | 2026-10-21 → 2026-05-04 A (-170d) | 2026-10-21 → 2026-06-05 A (-138d) | 0% → 100% | 5d → none |
| MH-2.26 / MH-2.27 | **MH-2.26 / MH-2.27** | 2026-10-19 → 2026-05-04 (-168d) | 2026-10-22 → 2026-06-05 (-139d) |  |  |
| A42000 | Excavation | 2026-10-19 → 2026-05-04 A (-168d) | 2026-10-19 → 2026-06-05 A (-136d) | 0% → 100% | 5d → none |
| A42010 | Pipe Laying | 2026-10-20 → 2026-05-04 A (-169d) | 2026-10-20 → 2026-06-05 A (-137d) | 0% → 100% | 5d → none |
| A42020 | Install Manhole | 2026-10-20 → 2026-05-04 A (-169d) | 2026-10-20 → 2026-06-05 A (-137d) | 0% → 100% | 6d → none |
| A42030 | Testing & Inspection | 2026-10-21 → 2026-05-04 A (-170d) | 2026-10-21 → 2026-06-05 A (-138d) | 0% → 100% | 5d → none |
| A42040 | Backfilling & Compaction | 2026-10-22 → 2026-05-04 A (-171d) | 2026-10-22 → 2026-06-05 A (-139d) | 0% → 100% | 5d → none |
| MH-2.26.0 / MH-2.26.1 | **MH-2.26.0 / MH-2.26.1** | 2026-10-20 → 2026-05-04 (-169d) | 2026-10-24 → 2026-06-05 (-141d) |  |  |

| ID | Task | Start | Finish | Complete | Total float |
| --- | --- | --- | --- | --- | --- |
| A42050 | Excavation | 2026-10-20 → 2026-05-04 A (-169d) | 2026-10-20 → 2026-06-05 A (-137d) | 0% → 100% | 5d → none |
| A42060 | Pipe Laying | 2026-10-21 → 2026-05-04 A (-170d) | 2026-10-21 → 2026-06-05 A (-138d) | 0% → 100% | 5d → none |
| A42070 | Install Manhole | 2026-10-21 → 2026-05-04 A (-170d) | 2026-10-21 → 2026-06-05 A (-138d) | 0% → 100% | 6d → none |
| A42080 | Testing & Inspection | 2026-10-22 → 2026-05-04 A (-171d) | 2026-10-22 → 2026-06-05 A (-139d) | 0% → 100% | 5d → none |
| A42090 | Backfilling & Compaction | 2026-10-24 → 2026-05-04 A (-173d) | 2026-10-24 → 2026-06-05 A (-141d) | 0% → 100% | 5d → none |
| MH-2.26.0 / MH-2.26.1A | **MH-2.26.0 / MH-2.26.1A** | 2026-10-21 → 2026-05-04 (-170d) | 2026-10-25 → 2026-06-05 (-142d) |  |  |
| A42100 | Excavation | 2026-10-21 → 2026-05-04 A (-170d) | 2026-10-21 → 2026-06-05 A (-138d) | 0% → 100% | 5d → none |
| A42110 | Pipe Laying | 2026-10-22 → 2026-05-04 A (-171d) | 2026-10-22 → 2026-06-05 A (-139d) | 0% → 100% | 5d → none |
| A42120 | Install Manhole | 2026-10-22 → 2026-05-04 A (-171d) | 2026-10-22 → 2026-06-05 A (-139d) | 0% → 100% | 6d → none |
| A42130 | Testing & Inspection | 2026-10-24 → 2026-05-04 A (-173d) | 2026-10-24 → 2026-06-05 A (-141d) | 0% → 100% | 5d → none |
| A42140 | Backfilling & Compaction | 2026-10-25 → 2026-05-04 A (-174d) | 2026-10-25 → 2026-06-05 A (-142d) | 0% → 100% | 5d → none |
| MH-2.26.1 / MH-2.26.2 | **MH-2.26.1 / MH-2.26.2** | 2026-10-22 → 2026-05-04 (-171d) | 2026-10-26 → 2026-06-05 (-143d) |  |  |
| A42150 | Excavation | 2026-10-22 → 2026-05-04 A (-171d) | 2026-10-22 → 2026-06-05 A (-139d) | 0% → 100% | 5d → none |
| A42160 | Pipe Laying | 2026-10-24 → 2026-05-04 A (-173d) | 2026-10-24 → 2026-06-05 A (-141d) | 0% → 100% | 5d → none |
| A42170 | Install Manhole | 2026-10-24 → 2026-05-04 A (-173d) | 2026-10-24 → 2026-06-05 A (-141d) | 0% → 100% | 6d → none |
| A42180 | Testing & Inspection | 2026-10-25 → 2026-05-04 A (-174d) | 2026-10-25 → 2026-06-05 A (-142d) | 0% → 100% | 5d → none |
| A42190 | Backfilling & Compaction | 2026-10-26 → 2026-05-04 A (-175d) | 2026-10-26 → 2026-06-05 A (-143d) | 0% → 100% | 5d → none |
| MH-2.27 / MH-2.28 | **MH-2.27 / MH-2.28** | 2026-10-24 → 2026-05-04 (-173d) | 2026-10-27 → 2026-06-05 (-144d) |  |  |
| A42200 | Excavation | 2026-10-24 → 2026-05-04 A (-173d) | 2026-10-24 → 2026-06-05 A (-141d) | 0% → 100% | 5d → none |
| A42210 | Pipe Laying | 2026-10-25 → 2026-05-04 A (-174d) | 2026-10-25 → 2026-06-05 A (-142d) | 0% → 100% | 5d → none |
| A42220 | Install Manhole | 2026-10-25 → 2026-05-04 A (-174d) | 2026-10-25 → 2026-06-05 A (-142d) | 0% → 100% | 6d → none |
| A42230 | Testing & Inspection | 2026-10-26 → 2026-05-04 A (-175d) | 2026-10-26 → 2026-06-05 A (-143d) | 0% → 100% | 5d → none |
| A42240 | Backfilling & Compaction | 2026-10-27 → 2026-05-04 A (-176d) | 2026-10-27 → 2026-06-05 A (-144d) | 0% → 100% | 5d → none |
| MH-2.27.0 / MH-2.27.1 | **MH-2.27.0 / MH-2.27.1** | 2026-10-25 → 2026-05-04 (-174d) | 2026-10-28 → 2026-06-05 (-145d) |  |  |
| A42250 | Excavation | 2026-10-25 → 2026-05-04 A (-174d) | 2026-10-25 → 2026-06-05 A (-142d) | 0% → 100% | 5d → none |
| A42260 | Pipe Laying | 2026-10-26 → 2026-05-04 A (-175d) | 2026-10-26 → 2026-06-05 A (-143d) | 0% → 100% | 5d → none |
| A42270 | Install Manhole | 2026-10-26 → 2026-05-04 A (-175d) | 2026-10-26 → 2026-06-05 A (-143d) | 0% → 100% | 6d → none |
| A42280 | Testing & Inspection | 2026-10-27 → 2026-05-04 A (-176d) | 2026-10-27 → 2026-06-05 A (-144d) | 0% → 100% | 5d → none |
| A42290 | Backfilling & Compaction | 2026-10-28 → 2026-05-04 A (-177d) | 2026-10-28 → 2026-06-05 A (-145d) | 0% → 100% | 5d → none |
| MH-2.28 / MH-2.29 | **MH-2.28 / MH-2.29** | 2026-10-26 → 2026-05-04 (-175d) | 2026-10-29 → 2026-06-05 (-146d) |  |  |
| A42300 | Excavation | 2026-10-26 → 2026-05-04 A (-175d) | 2026-10-26 → 2026-06-05 A (-143d) | 0% → 100% | 5d → none |
| A42310 | Pipe Laying | 2026-10-27 → 2026-05-04 A (-176d) | 2026-10-27 → 2026-06-05 A (-144d) | 0% → 100% | 5d → none |
| A42320 | Install Manhole | 2026-10-27 → 2026-05-04 A (-176d) | 2026-10-27 → 2026-06-05 A (-144d) | 0% → 100% | 6d → none |
| A42330 | Testing & Inspection | 2026-10-28 → 2026-05-04 A (-177d) | 2026-10-28 → 2026-06-05 A (-145d) | 0% → 100% | 5d → none |
| A42340 | Backfilling & Compaction | 2026-10-29 → 2026-05-04 A (-178d) | 2026-10-29 → 2026-06-05 A (-146d) | 0% → 100% | 5d → none |
| MH-2.28.0 / MH-2.28.1 | **MH-2.28.0 / MH-2.28.1** | 2026-10-27 → 2026-05-04 (-176d) | 2026-10-31 → 2026-06-05 (-148d) |  |  |
| A42350 | Excavation | 2026-10-27 → 2026-05-04 A (-176d) | 2026-10-27 → 2026-06-05 A (-144d) | 0% → 100% | 5d → none |
| A42360 | Pipe Laying | 2026-10-28 → 2026-05-04 A (-177d) | 2026-10-28 → 2026-06-05 A (-145d) | 0% → 100% | 5d → none |
| A42370 | Install Manhole | 2026-10-28 → 2026-05-04 A (-177d) | 2026-10-28 → 2026-06-05 A (-145d) | 0% → 100% | 6d → none |
| A42380 | Testing & Inspection | 2026-10-29 → 2026-05-04 A (-178d) | 2026-10-29 → 2026-06-05 A (-146d) | 0% → 100% | 5d → none |
| A42390 | Backfilling & Compaction | 2026-10-31 → 2026-05-04 A (-180d) | 2026-10-31 → 2026-06-05 A (-148d) | 0% → 100% | 5d → none |
| MH-2.29 / MH-2.30 | **MH-2.29 / MH-2.30** | 2026-10-28 → 2026-05-04 (-177d) | 2026-11-01 → 2026-06-05 (-149d) |  |  |
| A42400 | Excavation | 2026-10-28 → 2026-05-04 A (-177d) | 2026-10-28 → 2026-06-05 A (-145d) | 0% → 100% | 5d → none |
| A42410 | Pipe Laying | 2026-10-29 → 2026-05-04 A (-178d) | 2026-10-29 → 2026-06-05 A (-146d) | 0% → 100% | 5d → none |
| A42420 | Install Manhole | 2026-10-29 → 2026-05-04 A (-178d) | 2026-10-29 → 2026-06-05 A (-146d) | 0% → 100% | 6d → none |
| A42430 | Testing & Inspection | 2026-10-31 → 2026-05-04 A (-180d) | 2026-10-31 → 2026-06-05 A (-148d) | 0% → 100% | 5d → none |
| A42440 | Backfilling & Compaction | 2026-11-01 → 2026-05-04 A (-181d) | 2026-11-01 → 2026-06-05 A (-149d) | 0% → 100% | 5d → none |
| MH-2.29.0 / MH-2.29.1 | **MH-2.29.0 / MH-2.29.1** | 2026-10-29 → 2026-05-04 (-178d) | 2026-11-02 → 2026-06-05 (-150d) |  |  |
| A42450 | Excavation | 2026-10-29 → 2026-05-04 A (-178d) | 2026-10-29 → 2026-06-05 A (-146d) | 0% → 100% | 5d → none |
| A42460 | Pipe Laying | 2026-10-31 → 2026-05-04 A (-180d) | 2026-10-31 → 2026-06-05 A (-148d) | 0% → 100% | 5d → none |
| A42470 | Install Manhole | 2026-10-31 → 2026-05-04 A (-180d) | 2026-10-31 → 2026-06-05 A (-148d) | 0% → 100% | 6d → none |
| A42480 | Testing & Inspection | 2026-11-01 → 2026-05-04 A (-181d) | 2026-11-01 → 2026-06-05 A (-149d) | 0% → 100% | 5d → none |
| A42490 | Backfilling & Compaction | 2026-11-02 → 2026-05-04 A (-182d) | 2026-11-02 → 2026-06-05 A (-150d) | 0% → 100% | 5d → none |
| MH-2.30 / MH-2.31 | **MH-2.30 / MH-2.31** | 2026-10-31 → 2026-05-04 (-180d) | 2026-11-03 → 2026-06-05 (-151d) |  |  |
| A42500 | Excavation | 2026-10-31 → 2026-05-04 A (-180d) | 2026-10-31 → 2026-06-05 A (-148d) | 0% → 100% | 5d → none |
| A42510 | Pipe Laying | 2026-11-01 → 2026-05-04 A (-181d) | 2026-11-01 → 2026-06-05 A (-149d) | 0% → 100% | 5d → none |
| A42520 | Install Manhole | 2026-11-01 → 2026-05-04 A (-181d) | 2026-11-01 → 2026-06-05 A (-149d) | 0% → 100% | 6d → none |
| A42530 | Testing & Inspection | 2026-11-02 → 2026-05-04 A (-182d) | 2026-11-02 → 2026-06-05 A (-150d) | 0% → 100% | 5d → none |
| A42540 | Backfilling & Compaction | 2026-11-03 → 2026-05-04 A (-183d) | 2026-11-03 → 2026-06-05 A (-151d) | 0% → 100% | 5d → none |
| MH-2.30.0 / MH-2.30.1 | **MH-2.30.0 / MH-2.30.1** | 2026-11-01 → 2026-05-04 (-181d) | 2026-11-04 → 2026-06-05 (-152d) |  |  |
| A42550 | Excavation | 2026-11-01 → 2026-05-04 A (-181d) | 2026-11-01 → 2026-06-05 A (-149d) | 0% → 100% | 5d → none |
| A42560 | Pipe Laying | 2026-11-02 → 2026-05-04 A (-182d) | 2026-11-02 → 2026-06-05 A (-150d) | 0% → 100% | 5d → none |
| A42570 | Install Manhole | 2026-11-02 → 2026-05-04 A (-182d) | 2026-11-02 → 2026-06-05 A (-150d) | 0% → 100% | 6d → none |
| A42580 | Testing & Inspection | 2026-11-03 → 2026-05-04 A (-183d) | 2026-11-03 → 2026-06-05 A (-151d) | 0% → 100% | 5d → none |
| A42590 | Backfilling & Compaction | 2026-11-04 → 2026-05-04 A (-184d) | 2026-11-04 → 2026-06-05 A (-152d) | 0% → 100% | 5d → none |
| MH-2.31 / MH-2.32 | **MH-2.31 / MH-2.32** | 2026-11-02 → 2026-05-04 (-182d) | 2026-11-05 → 2026-06-05 (-153d) |  |  |
| A42600 | Excavation | 2026-11-02 → 2026-05-04 A (-182d) | 2026-11-02 → 2026-06-05 A (-150d) | 0% → 100% | 5d → none |
| A42610 | Pipe Laying | 2026-11-03 → 2026-05-04 A (-183d) | 2026-11-03 → 2026-06-05 A (-151d) | 0% → 100% | 5d → none |
| A42620 | Install Manhole | 2026-11-03 → 2026-05-04 A (-183d) | 2026-11-03 → 2026-06-05 A (-151d) | 0% → 100% | 6d → none |
| A42630 | Testing & Inspection | 2026-11-04 → 2026-05-04 A (-184d) | 2026-11-04 → 2026-06-05 A (-152d) | 0% → 100% | 5d → none |

| ID | Task | Start | Finish | Complete | Total float |
| --- | --- | --- | --- | --- | --- |
| A42640 | Backfilling & Compaction | 2026-11-05 → 2026-05-04 A (-185d) | 2026-11-05 → 2026-06-05 A (-153d) | 0% → 100% | 5d → none |
| MH-2.31.0 / MH-2.31.1 | **MH-2.31.0 / MH-2.31.1** | 2026-11-03 → 2026-05-04 (-183d) | 2026-11-07 → 2026-06-05 (-155d) |  |  |
| A42650 | Excavation | 2026-11-03 → 2026-05-04 A (-183d) | 2026-11-03 → 2026-06-05 A (-151d) | 0% → 100% | 5d → none |
| A42660 | Pipe Laying | 2026-11-04 → 2026-05-04 A (-184d) | 2026-11-04 → 2026-06-05 A (-152d) | 0% → 100% | 5d → none |
| A42670 | Install Manhole | 2026-11-04 → 2026-05-04 A (-184d) | 2026-11-04 → 2026-06-05 A (-152d) | 0% → 100% | 6d → none |
| A42680 | Testing & Inspection | 2026-11-05 → 2026-05-04 A (-185d) | 2026-11-05 → 2026-06-05 A (-153d) | 0% → 100% | 5d → none |
| A42690 | Backfilling & Compaction | 2026-11-07 → 2026-05-04 A (-187d) | 2026-11-07 → 2026-06-05 A (-155d) | 0% → 100% | 5d → none |
| MH-2.32 / MH-2.33 | **MH-2.32 / MH-2.33** | 2026-11-04 → 2026-05-04 (-184d) | 2026-11-08 → 2026-06-05 (-156d) |  |  |
| A42700 | Excavation | 2026-11-04 → 2026-05-04 A (-184d) | 2026-11-04 → 2026-06-05 A (-152d) | 0% → 100% | 5d → none |
| A42710 | Pipe Laying | 2026-11-05 → 2026-05-04 A (-185d) | 2026-11-05 → 2026-06-05 A (-153d) | 0% → 100% | 5d → none |
| A42720 | Install Manhole | 2026-11-05 → 2026-05-04 A (-185d) | 2026-11-05 → 2026-06-05 A (-153d) | 0% → 100% | 6d → none |
| A42730 | Testing & Inspection | 2026-11-07 → 2026-05-04 A (-187d) | 2026-11-07 → 2026-06-05 A (-155d) | 0% → 100% | 5d → none |
| A42740 | Backfilling & Compaction | 2026-11-08 → 2026-05-04 A (-188d) | 2026-11-08 → 2026-06-05 A (-156d) | 0% → 100% | 5d → none |
| MH-2.32.0 / MH-2.32.1 | **MH-2.32.0 / MH-2.32.1** | 2026-11-05 → 2026-05-04 (-185d) | 2026-11-09 → 2026-06-05 (-157d) |  |  |
| A42750 | Excavation | 2026-11-05 → 2026-05-04 A (-185d) | 2026-11-05 → 2026-06-05 A (-153d) | 0% → 100% | 5d → none |
| A42760 | Pipe Laying | 2026-11-07 → 2026-05-04 A (-187d) | 2026-11-07 → 2026-06-05 A (-155d) | 0% → 100% | 5d → none |
| A42770 | Install Manhole | 2026-11-07 → 2026-05-04 A (-187d) | 2026-11-07 → 2026-06-05 A (-155d) | 0% → 100% | 6d → none |
| A42780 | Testing & Inspection | 2026-11-08 → 2026-05-04 A (-188d) | 2026-11-08 → 2026-06-05 A (-156d) | 0% → 100% | 5d → none |
| A42790 | Backfilling & Compaction | 2026-11-09 → 2026-05-04 A (-189d) | 2026-11-09 → 2026-06-05 A (-157d) | 0% → 100% | 5d → none |
| MH-2.33 / MH-2.34 | **MH-2.33 / MH-2.34** | 2026-11-07 → 2026-05-04 (-187d) | 2026-11-10 → 2026-06-05 (-158d) |  |  |
| A42800 | Excavation | 2026-11-07 → 2026-05-04 A (-187d) | 2026-11-07 → 2026-06-05 A (-155d) | 0% → 100% | 5d → none |
| A42810 | Pipe Laying | 2026-11-08 → 2026-05-04 A (-188d) | 2026-11-08 → 2026-06-05 A (-156d) | 0% → 100% | 5d → none |
| A42820 | Install Manhole | 2026-11-08 → 2026-05-04 A (-188d) | 2026-11-08 → 2026-06-05 A (-156d) | 0% → 100% | 6d → none |
| A42830 | Testing & Inspection | 2026-11-09 → 2026-05-04 A (-189d) | 2026-11-09 → 2026-06-05 A (-157d) | 0% → 100% | 5d → none |
| A42840 | Backfilling & Compaction | 2026-11-10 → 2026-05-04 A (-190d) | 2026-11-10 → 2026-06-05 A (-158d) | 0% → 100% | 5d → none |
| MH-2.5 / MH-2.6 | **MH-2.5 / MH-2.6** | 2026-11-08 → 2026-05-04 (-188d) | 2026-11-11 → 2026-06-05 (-159d) |  |  |
| A42850 | Excavation | 2026-11-08 → 2026-05-04 A (-188d) | 2026-11-08 → 2026-06-05 A (-156d) | 0% → 100% | 5d → none |
| A42860 | Pipe Laying | 2026-11-09 → 2026-05-04 A (-189d) | 2026-11-09 → 2026-06-05 A (-157d) | 0% → 100% | 5d → none |
| A42870 | Install Manhole | 2026-11-09 → 2026-05-04 A (-189d) | 2026-11-09 → 2026-06-05 A (-157d) | 0% → 100% | 6d → none |
| A42880 | Testing & Inspection | 2026-11-10 → 2026-05-04 A (-190d) | 2026-11-10 → 2026-06-05 A (-158d) | 0% → 100% | 5d → none |
| A42890 | Backfilling & Compaction | 2026-11-11 → 2026-05-04 A (-191d) | 2026-11-11 → 2026-06-05 A (-159d) | 0% → 100% | 5d → none |
| MH-2.5.0 / MH-2.5.1 | **MH-2.5.0 / MH-2.5.1** | 2026-11-09 → 2026-05-04 (-189d) | 2026-11-12 → 2026-06-05 (-160d) |  |  |
| A42900 | Excavation | 2026-11-09 → 2026-05-04 A (-189d) | 2026-11-09 → 2026-06-05 A (-157d) | 0% → 100% | 5d → none |
| A42910 | Pipe Laying | 2026-11-10 → 2026-05-04 A (-190d) | 2026-11-10 → 2026-06-05 A (-158d) | 0% → 100% | 5d → none |
| A42920 | Install Manhole | 2026-11-10 → 2026-05-04 A (-190d) | 2026-11-10 → 2026-06-05 A (-158d) | 0% → 100% | 6d → none |
| A42930 | Testing & Inspection | 2026-11-11 → 2026-05-04 A (-191d) | 2026-11-11 → 2026-06-05 A (-159d) | 0% → 100% | 5d → none |
| A42940 | Backfilling & Compaction | 2026-11-12 → 2026-05-04 A (-192d) | 2026-11-12 → 2026-06-05 A (-160d) | 0% → 100% | 5d → none |
| MH-2.5.1 / MH-2.5.2 | **MH-2.5.1 / MH-2.5.2** | 2026-11-10 → 2026-05-04 (-190d) | 2026-11-14 → 2026-06-05 (-162d) |  |  |
| A42950 | Excavation | 2026-11-10 → 2026-05-04 A (-190d) | 2026-11-10 → 2026-06-05 A (-158d) | 0% → 100% | 5d → none |
| A42960 | Pipe Laying | 2026-11-11 → 2026-05-04 A (-191d) | 2026-11-11 → 2026-06-05 A (-159d) | 0% → 100% | 5d → none |
| A42970 | Install Manhole | 2026-11-11 → 2026-05-04 A (-191d) | 2026-11-11 → 2026-06-05 A (-159d) | 0% → 100% | 6d → none |
| A42980 | Testing & Inspection | 2026-11-12 → 2026-05-04 A (-192d) | 2026-11-12 → 2026-06-05 A (-160d) | 0% → 100% | 5d → none |
| A42990 | Backfilling & Compaction | 2026-11-14 → 2026-05-04 A (-194d) | 2026-11-14 → 2026-06-05 A (-162d) | 0% → 100% | 5d → none |
| MH-2.6 / MH-2.7 | **MH-2.6 / MH-2.7** | 2026-11-11 → 2026-05-04 (-191d) | 2026-11-15 → 2026-06-05 (-163d) |  |  |
| A43000 | Excavation | 2026-11-11 → 2026-05-04 A (-191d) | 2026-11-11 → 2026-06-05 A (-159d) | 0% → 100% | 5d → none |
| A43010 | Pipe Laying | 2026-11-12 → 2026-05-04 A (-192d) | 2026-11-12 → 2026-06-05 A (-160d) | 0% → 100% | 5d → none |
| A43020 | Install Manhole | 2026-11-12 → 2026-05-04 A (-192d) | 2026-11-12 → 2026-06-05 A (-160d) | 0% → 100% | 6d → none |
| A43030 | Testing & Inspection | 2026-11-14 → 2026-05-04 A (-194d) | 2026-11-14 → 2026-06-05 A (-162d) | 0% → 100% | 5d → none |
| A43040 | Backfilling & Compaction | 2026-11-15 → 2026-05-04 A (-195d) | 2026-11-15 → 2026-06-05 A (-163d) | 0% → 100% | 5d → none |
| MH-2.6.1 / MH-2.6.1A | **MH-2.6.1 / MH-2.6.1A** | 2026-11-12 → 2026-05-04 (-192d) | 2026-11-16 → 2026-06-05 (-164d) |  |  |
| A43050 | Excavation | 2026-11-12 → 2026-05-04 A (-192d) | 2026-11-12 → 2026-06-05 A (-160d) | 0% → 100% | 5d → none |
| A43060 | Pipe Laying | 2026-11-14 → 2026-05-04 A (-194d) | 2026-11-14 → 2026-06-05 A (-162d) | 0% → 100% | 5d → none |
| A43070 | Install Manhole | 2026-11-14 → 2026-05-04 A (-194d) | 2026-11-14 → 2026-06-05 A (-162d) | 0% → 100% | 6d → none |
| A43080 | Testing & Inspection | 2026-11-15 → 2026-05-04 A (-195d) | 2026-11-15 → 2026-06-05 A (-163d) | 0% → 100% | 5d → none |
| A43090 | Backfilling & Compaction | 2026-11-16 → 2026-05-04 A (-196d) | 2026-11-16 → 2026-06-05 A (-164d) | 0% → 100% | 5d → none |
| MH-2.7.0 / MH-2.7.1 | **MH-2.7.0 / MH-2.7.1** | 2026-11-14 → 2026-05-04 (-194d) | 2026-11-17 → 2026-06-05 (-165d) |  |  |
| A43100 | Excavation | 2026-11-14 → 2026-05-04 A (-194d) | 2026-11-14 → 2026-06-05 A (-162d) | 0% → 100% | 5d → none |
| A43110 | Pipe Laying | 2026-11-15 → 2026-05-04 A (-195d) | 2026-11-15 → 2026-06-05 A (-163d) | 0% → 100% | 5d → none |
| A43120 | Install Manhole | 2026-11-15 → 2026-05-04 A (-195d) | 2026-11-15 → 2026-06-05 A (-163d) | 0% → 100% | 6d → none |
| A43130 | Testing & Inspection | 2026-11-16 → 2026-05-04 A (-196d) | 2026-11-16 → 2026-06-05 A (-164d) | 0% → 100% | 5d → none |
| A43140 | Backfilling & Compaction | 2026-11-17 → 2026-05-04 A (-197d) | 2026-11-17 → 2026-06-05 A (-165d) | 0% → 100% | 5d → none |
| MH-2.8 / MH-2.9 | **MH-2.8 / MH-2.9** | 2026-11-15 → 2026-05-04 (-195d) | 2026-11-18 → 2026-06-05 (-166d) |  |  |
| A43150 | Excavation | 2026-11-15 → 2026-05-04 A (-195d) | 2026-11-15 → 2026-06-05 A (-163d) | 0% → 100% | 5d → none |
| A43160 | Pipe Laying | 2026-11-16 → 2026-05-04 A (-196d) | 2026-11-16 → 2026-06-05 A (-164d) | 0% → 100% | 5d → none |
| A43170 | Install Manhole | 2026-11-16 → 2026-05-04 A (-196d) | 2026-11-16 → 2026-06-05 A (-164d) | 0% → 100% | 6d → none |
| A43180 | Testing & Inspection | 2026-11-17 → 2026-05-04 A (-197d) | 2026-11-17 → 2026-06-05 A (-165d) | 0% → 100% | 5d → none |
| A43190 | Backfilling & Compaction | 2026-11-18 → 2026-05-04 A (-198d) | 2026-11-18 → 2026-06-05 A (-166d) | 0% → 100% | 5d → none |
| MH-2.8.1 / MH-2.8.1A | **MH-2.8.1 / MH-2.8.1A** | 2026-11-16 → 2026-05-04 (-196d) | 2026-11-19 → 2026-06-05 (-167d) |  |  |
| A43200 | Excavation | 2026-11-16 → 2026-05-04 A (-196d) | 2026-11-16 → 2026-06-05 A (-164d) | 0% → 100% | 5d → none |
| A43210 | Pipe Laying | 2026-11-17 → 2026-05-04 A (-197d) | 2026-11-17 → 2026-06-05 A (-165d) | 0% → 100% | 5d → none |

| ID | Task | Start | Finish | Complete | Total float |
| --- | --- | --- | --- | --- | --- |
| A43220 | Install Manhole | 2026-11-17 → 2026-05-04 A (-197d) | 2026-11-17 → 2026-06-05 A (-165d) | 0% → 100% | 6d → none |
| A43230 | Testing & Inspection | 2026-11-18 → 2026-05-04 A (-198d) | 2026-11-18 → 2026-06-05 A (-166d) | 0% → 100% | 5d → none |
| A43240 | Backfilling & Compaction | 2026-11-19 → 2026-05-04 A (-199d) | 2026-11-19 → 2026-06-05 A (-167d) | 0% → 100% | 5d → none |
| MH-2.9 / MH-2.10 | **MH-2.9 / MH-2.10** | 2026-11-17 → 2026-05-04 (-197d) | 2026-11-21 → 2026-06-05 (-169d) |  |  |
| A43250 | Excavation | 2026-11-17 → 2026-05-04 A (-197d) | 2026-11-17 → 2026-06-05 A (-165d) | 0% → 100% | 5d → none |
| A43260 | Pipe Laying | 2026-11-18 → 2026-05-04 A (-198d) | 2026-11-18 → 2026-06-05 A (-166d) | 0% → 100% | 5d → none |
| A43270 | Install Manhole | 2026-11-18 → 2026-05-04 A (-198d) | 2026-11-18 → 2026-06-05 A (-166d) | 0% → 100% | 6d → none |
| A43280 | Testing & Inspection | 2026-11-19 → 2026-05-04 A (-199d) | 2026-11-19 → 2026-06-05 A (-167d) | 0% → 100% | 5d → none |
| A43290 | Backfilling & Compaction | 2026-11-21 → 2026-05-04 A (-201d) | 2026-11-21 → 2026-06-05 A (-169d) | 0% → 100% | 5d → none |
| MH-2.9.0 / MH-2.9.1 | **MH-2.9.0 / MH-2.9.1** | 2026-11-18 → 2026-05-04 (-198d) | 2026-11-22 → 2026-06-05 (-170d) |  |  |
| A43300 | Excavation | 2026-11-18 → 2026-05-04 A (-198d) | 2026-11-18 → 2026-06-05 A (-166d) | 0% → 100% | 5d → none |
| A43310 | Pipe Laying | 2026-11-19 → 2026-05-04 A (-199d) | 2026-11-19 → 2026-06-05 A (-167d) | 0% → 100% | 5d → none |
| A43320 | Install Manhole | 2026-11-19 → 2026-05-04 A (-199d) | 2026-11-19 → 2026-06-05 A (-167d) | 0% → 100% | 6d → none |
| A43330 | Testing & Inspection | 2026-11-21 → 2026-05-04 A (-201d) | 2026-11-21 → 2026-06-05 A (-169d) | 0% → 100% | 5d → none |
| A43340 | Backfilling & Compaction | 2026-11-22 → 2026-05-04 A (-202d) | 2026-11-22 → 2026-06-05 A (-170d) | 0% → 100% | 5d → none |
| MH-2.7 / MH-2.8 | **MH-2.7 / MH-2.8** | 2026-11-19 → 2026-05-04 (-199d) | 2026-11-23 → 2026-06-05 (-171d) |  |  |
| A43350 | Excavation | 2026-11-19 → 2026-05-04 A (-199d) | 2026-11-19 → 2026-06-05 A (-167d) | 0% → 100% | 5d → none |
| A43360 | Pipe Laying | 2026-11-21 → 2026-05-04 A (-201d) | 2026-11-21 → 2026-06-05 A (-169d) | 0% → 100% | 5d → none |
| A43370 | Install Manhole | 2026-11-21 → 2026-05-04 A (-201d) | 2026-11-21 → 2026-06-05 A (-169d) | 0% → 100% | 6d → none |
| A43380 | Testing & Inspection | 2026-11-22 → 2026-05-04 A (-202d) | 2026-11-22 → 2026-06-05 A (-170d) | 0% → 100% | 5d → none |
| A43390 | Backfilling & Compaction | 2026-11-23 → 2026-05-04 A (-203d) | 2026-11-23 → 2026-06-05 A (-171d) | 0% → 100% | 5d → none |
| MH-1.10.10.0 / MH-1.10.10.1 | **MH-1.10.10.0 / MH-1.10.10.1** | 2026-11-21 → 2026-05-04 (-201d) | 2026-11-24 → 2026-07-05 (-142d) |  |  |
| A43400 | Excavation | 2026-11-21 → 2026-05-04 A (-201d) | 2026-11-21 → 2026-06-05 A (-169d) | 0% → 100% | 5d → none |
| A43410 | Pipe Laying | 2026-11-22 → 2026-05-04 A (-202d) | 2026-11-22 → 2026-06-05 A (-170d) | 0% → 100% | 5d → none |
| A43420 | Install Manhole | 2026-11-22 → 2026-06-04 A (-171d) | 2026-11-22 → 2026-07-05 A (-140d) | 0% → 100% | 6d → none |
| A43430 | Testing & Inspection | 2026-11-23 → 2026-06-04 A (-172d) | 2026-11-23 → 2026-07-05 A (-141d) | 0% → 100% | 5d → none |
| A43440 | Backfilling & Compaction | 2026-11-24 → 2026-06-04 A (-173d) | 2026-11-24 → 2026-07-05 A (-142d) | 0% → 100% | 5d → none |
| LR 04 | **LR 04** | 2026-08-12 → 2026-06-04 (-69d) | 2026-10-15 → 2026-07-05 (-102d) |  |  |
| MH-2.21.0 / MH-2.21.1 | **MH-2.21.0 / MH-2.21.1** | 2026-08-12 → 2026-06-04 (-69d) | 2026-08-30 → 2026-07-05 (-56d) |  |  |
| A43650 | Excavation | 2026-08-12 → 2026-06-04 A (-69d) | 2026-08-13 → 2026-07-05 A (-39d) | 0% → 100% | 22d → none |
| A43660 | Pipe Laying | 2026-08-15 → 2026-06-04 A (-72d) | 2026-08-23 → 2026-07-05 A (-49d) | 0% → 100% | 22d → none |
| A43670 | Install Manhole | 2026-08-15 → 2026-06-04 A (-72d) | 2026-08-18 → 2026-07-05 A (-44d) | 0% → 100% | 28d → none |
| A43680 | Testing & Inspection | 2026-08-24 → 2026-06-04 A (-81d) | 2026-08-25 → 2026-07-05 A (-51d) | 0% → 100% | 22d → none |
| A43690 | Backfilling & Compaction | 2026-08-26 → 2026-06-04 A (-83d) | 2026-08-30 → 2026-07-05 A (-56d) | 0% → 100% | 22d → none |
| MH-2.21.1 / MH-2.21.2 | **MH-2.21.1 / MH-2.21.2** | 2026-08-15 → 2026-06-04 (-72d) | 2026-09-03 → 2026-07-05 (-60d) |  |  |
| A43450 | Excavation | 2026-08-15 → 2026-06-04 A (-72d) | 2026-08-18 → 2026-07-05 A (-44d) | 0% → 100% | 22d → none |
| A43460 | Pipe Laying | 2026-08-19 → 2026-06-04 A (-76d) | 2026-08-27 → 2026-07-05 A (-53d) | 0% → 100% | 22d → none |
| A43470 | Install Manhole | 2026-08-19 → 2026-06-04 A (-76d) | 2026-08-23 → 2026-07-05 A (-49d) | 0% → 100% | 28d → none |
| A43480 | Testing & Inspection | 2026-08-29 → 2026-06-04 A (-86d) | 2026-08-30 → 2026-07-05 A (-56d) | 0% → 100% | 22d → none |
| A43490 | Backfilling & Compaction | 2026-08-31 → 2026-06-04 A (-88d) | 2026-09-03 → 2026-07-05 A (-60d) | 0% → 100% | 22d → none |
| MH-2.21.1.0 / MH-2.21.1.1 | **MH-2.21.1.0 / MH-2.21.1.1** | 2026-08-19 → 2026-06-04 (-76d) | 2026-09-08 → 2026-07-05 (-65d) |  |  |
| A43500 | Excavation | 2026-08-19 → 2026-06-04 A (-76d) | 2026-08-23 → 2026-07-05 A (-49d) | 0% → 100% | 22d → none |
| A43510 | Pipe Laying | 2026-08-24 → 2026-06-04 A (-81d) | 2026-09-01 → 2026-07-05 A (-58d) | 0% → 100% | 22d → none |
| A43520 | Install Manhole | 2026-08-24 → 2026-06-04 A (-81d) | 2026-08-27 → 2026-07-05 A (-53d) | 0% → 100% | 28d → none |
| A43530 | Testing & Inspection | 2026-09-02 → 2026-06-04 A (-90d) | 2026-09-03 → 2026-07-05 A (-60d) | 0% → 100% | 22d → none |
| A43540 | Backfilling & Compaction | 2026-09-05 → 2026-06-04 A (-93d) | 2026-09-08 → 2026-07-05 A (-65d) | 0% → 100% | 22d → none |
| MH-2.21.2 / MH-2.21.3 | **MH-2.21.2 / MH-2.21.3** | 2026-08-24 → 2026-06-04 (-81d) | 2026-09-13 → 2026-07-05 (-70d) |  |  |
| A43550 | Excavation | 2026-08-24 → 2026-06-04 A (-81d) | 2026-08-27 → 2026-07-05 A (-53d) | 0% → 100% | 22d → none |
| A43560 | Pipe Laying | 2026-08-29 → 2026-06-04 A (-86d) | 2026-09-06 → 2026-07-05 A (-63d) | 0% → 100% | 22d → none |
| A43570 | Install Manhole | 2026-08-29 → 2026-06-04 A (-86d) | 2026-09-01 → 2026-07-05 A (-58d) | 0% → 100% | 28d → none |
| A43580 | Testing & Inspection | 2026-09-07 → 2026-06-04 A (-95d) | 2026-09-08 → 2026-07-05 A (-65d) | 0% → 100% | 22d → none |
| A43590 | Backfilling & Compaction | 2026-09-09 → 2026-06-04 A (-97d) | 2026-09-13 → 2026-07-05 A (-70d) | 0% → 100% | 22d → none |
| MH-2.21.2.0 / MH-2.21.2.1 | **MH-2.21.2.0 / MH-2.21.2.1** | 2026-08-29 → 2026-06-04 (-86d) | 2026-09-17 → 2026-07-05 (-74d) |  |  |
| A43700 | Excavation | 2026-08-29 → 2026-06-04 A (-86d) | 2026-09-01 → 2026-07-05 A (-58d) | 0% → 100% | 22d → none |
| A43710 | Pipe Laying | 2026-09-02 → 2026-06-04 A (-90d) | 2026-09-10 → 2026-07-05 A (-67d) | 0% → 100% | 22d → none |
| A43720 | Install Manhole | 2026-09-02 → 2026-06-04 A (-90d) | 2026-09-06 → 2026-07-05 A (-63d) | 0% → 100% | 28d → none |
| A43730 | Testing & Inspection | 2026-09-12 → 2026-06-04 A (-100d) | 2026-09-13 → 2026-07-05 A (-70d) | 0% → 100% | 22d → none |
| A43740 | Backfilling & Compaction | 2026-09-14 → 2026-06-04 A (-102d) | 2026-09-17 → 2026-07-05 A (-74d) | 0% → 100% | 22d → none |
| MH-2.21.3 / MH-2.21.4 | **MH-2.21.3 / MH-2.21.4** | 2026-09-02 → 2026-06-04 (-90d) | 2026-09-22 → 2026-07-05 (-79d) |  |  |
| A43750 | Excavation | 2026-09-02 → 2026-06-04 A (-90d) | 2026-09-06 → 2026-07-05 A (-63d) | 0% → 100% | 22d → none |
| A43760 | Pipe Laying | 2026-09-07 → 2026-06-04 A (-95d) | 2026-09-15 → 2026-07-05 A (-72d) | 0% → 100% | 22d → none |
| A43770 | Install Manhole | 2026-09-07 → 2026-06-04 A (-95d) | 2026-09-10 → 2026-07-05 A (-67d) | 0% → 100% | 28d → none |
| A43780 | Testing & Inspection | 2026-09-16 → 2026-06-04 A (-104d) | 2026-09-17 → 2026-07-05 A (-74d) | 0% → 100% | 22d → none |
| A43790 | Backfilling & Compaction | 2026-09-19 → 2026-06-04 A (-107d) | 2026-09-22 → 2026-07-05 A (-79d) | 0% → 100% | 22d → none |
| MH-2.21.3.0 / MH-2.21.3.1 | **MH-2.21.3.0 / MH-2.21.3.1** | 2026-09-07 → 2026-06-04 (-95d) | 2026-09-27 → 2026-07-05 (-84d) |  |  |
| A43800 | Excavation | 2026-09-07 → 2026-06-04 A (-95d) | 2026-09-10 → 2026-07-05 A (-67d) | 0% → 100% | 22d → none |
| A43810 | Pipe Laying | 2026-09-12 → 2026-06-04 A (-100d) | 2026-09-20 → 2026-07-05 A (-77d) | 0% → 100% | 22d → none |
| A43820 | Install Manhole | 2026-09-12 → 2026-06-04 A (-100d) | 2026-09-15 → 2026-07-05 A (-72d) | 0% → 100% | 28d → none |
| A43830 | Testing & Inspection | 2026-09-21 → 2026-06-04 A (-109d) | 2026-09-22 → 2026-07-05 A (-79d) | 0% → 100% | 22d → none |
| A43840 | Backfilling & Compaction | 2026-09-23 → 2026-06-04 A (-111d) | 2026-09-27 → 2026-07-05 A (-84d) | 0% → 100% | 22d → none |

| ID | Task | Start | Finish | Complete | Total float |
| --- | --- | --- | --- | --- | --- |
| MH-2.21.4 / MH-2.21.5 | **MH-2.21.4 / MH-2.21.5** | 2026-09-12 → 2026-06-04 (-100d) | 2026-10-01 → 2026-07-05 (-88d) |  |  |
| A43850 | Excavation | 2026-09-12 → 2026-06-04 A (-100d) | 2026-09-15 → 2026-07-05 A (-72d) | 0% → 100% | 22d → none |
| A43860 | Pipe Laying | 2026-09-16 → 2026-06-04 A (-104d) | 2026-09-24 → 2026-07-05 A (-81d) | 0% → 100% | 22d → none |
| A43870 | Install Manhole | 2026-09-16 → 2026-06-04 A (-104d) | 2026-09-20 → 2026-07-05 A (-77d) | 0% → 100% | 28d → none |
| A43880 | Testing & Inspection | 2026-09-26 → 2026-06-04 A (-114d) | 2026-09-27 → 2026-07-05 A (-84d) | 0% → 100% | 22d → none |
| A43890 | Backfilling & Compaction | 2026-09-28 → 2026-06-04 A (-116d) | 2026-10-01 → 2026-07-05 A (-88d) | 0% → 100% | 22d → none |
| MH-2.21.5 / MH-2.21.6 | **MH-2.21.5 / MH-2.21.6** | 2026-09-16 → 2026-06-04 (-104d) | 2026-10-06 → 2026-07-05 (-93d) |  |  |
| A43900 | Excavation | 2026-09-16 → 2026-06-04 A (-104d) | 2026-09-20 → 2026-07-05 A (-77d) | 0% → 100% | 22d → none |
| A43910 | Pipe Laying | 2026-09-21 → 2026-06-04 A (-109d) | 2026-09-29 → 2026-07-05 A (-86d) | 0% → 100% | 22d → none |
| A43920 | Install Manhole | 2026-09-21 → 2026-06-04 A (-109d) | 2026-09-24 → 2026-07-05 A (-81d) | 0% → 100% | 28d → none |
| A43930 | Testing & Inspection | 2026-09-30 → 2026-06-04 A (-118d) | 2026-10-01 → 2026-07-05 A (-88d) | 0% → 100% | 22d → none |
| A43940 | Backfilling & Compaction | 2026-10-03 → 2026-06-04 A (-121d) | 2026-10-06 → 2026-07-05 A (-93d) | 0% → 100% | 22d → none |
| MH-2.21.6 / MH-2.21.7 | **MH-2.21.6 / MH-2.21.7** | 2026-09-21 → 2026-06-04 (-109d) | 2026-10-11 → 2026-07-05 (-98d) |  |  |
| A43950 | Excavation | 2026-09-21 → 2026-06-04 A (-109d) | 2026-09-24 → 2026-07-05 A (-81d) | 0% → 100% | 22d → none |
| A43960 | Pipe Laying | 2026-09-26 → 2026-06-04 A (-114d) | 2026-10-04 → 2026-07-05 A (-91d) | 0% → 100% | 22d → none |
| A43970 | Install Manhole | 2026-09-26 → 2026-06-04 A (-114d) | 2026-09-29 → 2026-07-05 A (-86d) | 0% → 100% | 28d → none |
| A43980 | Testing & Inspection | 2026-10-05 → 2026-06-04 A (-123d) | 2026-10-06 → 2026-07-05 A (-93d) | 0% → 100% | 22d → none |
| A43990 | Backfilling & Compaction | 2026-10-07 → 2026-06-04 A (-125d) | 2026-10-11 → 2026-07-05 A (-98d) | 0% → 100% | 22d → none |
| MH-2.21.7 / MH-2.21.8 | **MH-2.21.7 / MH-2.21.8** | 2026-09-26 → 2026-06-04 (-114d) | 2026-10-15 → 2026-07-05 (-102d) |  |  |
| A44000 | Excavation | 2026-09-26 → 2026-06-04 A (-114d) | 2026-09-29 → 2026-07-05 A (-86d) | 0% → 100% | 26d → none |
| A44010 | Pipe Laying | 2026-09-30 → 2026-06-04 A (-118d) | 2026-10-04 → 2026-07-05 A (-91d) | 0% → 100% | 26d → none |
| A44020 | Install Manhole | 2026-09-30 → 2026-06-04 A (-118d) | 2026-10-04 → 2026-07-05 A (-91d) | 0% → 100% | 28d → none |
| A44030 | Testing & Inspection | 2026-10-05 → 2026-06-04 A (-123d) | 2026-10-06 → 2026-07-05 A (-93d) | 0% → 100% | 26d → none |
| A44040 | Backfilling & Compaction | 2026-10-12 → 2026-06-04 A (-130d) | 2026-10-15 → 2026-07-05 A (-102d) | 0% → 100% | 22d → none |
| LR 05 | **LR 05** | 2026-05-10 → 2026-06-04 (+25d) | 2026-07-29 → 2027-02-22 (+208d) |  |  |
| MH-2.10 / MH-2.11 | **MH-2.10 / MH-2.11** | 2026-05-10 → 2026-06-04 (+25d) | 2026-05-30 → 2026-11-02 (+156d) |  |  |
| A44050 | Excavation | 2026-05-10 → 2026-06-04 A (+25d) | 2026-05-13 → 2026-07-05 A (+53d) | 0% → 100% | 89d → none |
| A44060 | Pipe Laying | 2026-05-14 → 2026-06-04 A (+21d) | 2026-05-23 → 2026-07-05 A (+43d) | 0% → 100% | 89d → none |
| A44070 | Install Manhole | 2026-05-14 → 2026-06-04 A (+21d) | 2026-05-18 → 2026-07-05 A (+48d) | 0% → 100% | 95d → none |
| A44080 | Testing & Inspection | 2026-05-24 → 2026-10-26 (+155d) | 2026-05-25 → 2026-10-28 (+156d) |  | 89d → -28.1d |
| A44090 | Backfilling & Compaction | 2026-05-26 → 2026-10-28 (+155d) | 2026-05-30 → 2026-11-02 (+156d) |  | 89d → -28.1d |
| MH-2.10.0 / MH-2.10.1 | **MH-2.10.0 / MH-2.10.1** | 2026-05-14 → 2026-06-04 (+21d) | 2026-06-03 → 2026-11-07 (+157d) |  |  |
| A44100 | Excavation | 2026-05-14 → 2026-06-04 A (+21d) | 2026-05-18 → 2026-07-05 A (+48d) | 0% → 100% | 89d → none |
| A44110 | Pipe Laying | 2026-05-19 → 2026-06-04 A (+16d) | 2026-05-27 → 2026-07-05 A (+39d) | 0% → 100% | 89d → none |
| A44120 | Install Manhole | 2026-05-19 → 2026-06-04 A (+16d) | 2026-05-23 → 2026-07-05 A (+43d) | 0% → 100% | 95d → none |
| A44130 | Testing & Inspection | 2026-05-28 → 2026-10-26 (+151d) | 2026-05-30 → 2026-10-28 (+151d) |  | 89d → -24.1d |
| A44140 | Backfilling & Compaction | 2026-05-31 → 2026-11-02 (+155d) | 2026-06-03 → 2026-11-07 (+157d) |  | 89d → -28.1d |
| MH-2.11 / MH-2.12 | **MH-2.11 / MH-2.12** | 2026-05-19 → 2026-06-04 (+16d) | 2026-06-08 → 2026-11-11 (+156d) |  |  |
| A44150 | Excavation | 2026-05-19 → 2026-06-04 A (+16d) | 2026-05-23 → 2026-07-05 A (+43d) | 0% → 100% | 89d → none |
| A44160 | Pipe Laying | 2026-05-24 → 2026-06-04 A (+11d) | 2026-06-01 → 2026-07-05 A (+34d) | 0% → 100% | 89d → none |
| A44170 | Install Manhole | 2026-05-24 → 2026-06-04 A (+11d) | 2026-05-27 → 2026-07-05 A (+39d) | 0% → 100% | 95d → none |
| A44180 | Testing & Inspection | 2026-06-02 → 2026-10-26 (+146d) | 2026-06-03 → 2026-10-28 (+147d) |  | 89d → -20.1d |
| A44190 | Backfilling & Compaction | 2026-06-04 → 2026-11-07 (+156d) | 2026-06-08 → 2026-11-11 (+156d) |  | 89d → -28.1d |
| MH-2.11.0 / MH-2.11.1 | **MH-2.11.0 / MH-2.11.1** | 2026-05-24 → 2026-06-04 (+11d) | 2026-06-13 → 2026-11-16 (+156d) |  |  |
| A44200 | Excavation | 2026-05-24 → 2026-06-04 A (+11d) | 2026-05-27 → 2026-07-05 A (+39d) | 0% → 100% | 89d → none |
| A44210 | Pipe Laying | 2026-05-28 → 2026-06-04 A (+7d) | 2026-06-06 → 2026-07-05 A (+29d) | 0% → 100% | 89d → none |
| A44220 | Install Manhole | 2026-05-28 → 2026-06-04 A (+7d) | 2026-06-01 → 2026-07-05 A (+34d) | 0% → 100% | 95d → none |
| A44230 | Testing & Inspection | 2026-06-07 → 2026-10-26 (+141d) | 2026-06-08 → 2026-10-28 (+142d) |  | 89d → -16.1d |
| A44240 | Backfilling & Compaction | 2026-06-09 → 2026-11-11 (+155d) | 2026-06-13 → 2026-11-16 (+156d) |  | 89d → -28.1d |
| MH-2.12 / MH-2.13 | **MH-2.12 / MH-2.13** | 2026-05-28 → 2026-06-04 (+7d) | 2026-06-17 → 2026-11-21 (+157d) |  |  |
| A44250 | Excavation | 2026-05-28 → 2026-06-04 A (+7d) | 2026-06-01 → 2026-07-05 A (+34d) | 0% → 100% | 89d → none |
| A44260 | Pipe Laying | 2026-06-02 → 2026-06-04 A (+2d) | 2026-06-10 → 2026-07-05 A (+25d) | 0% → 100% | 89d → none |
| A44270 | Install Manhole | 2026-06-02 → 2026-06-04 A (+2d) | 2026-06-06 → 2026-07-05 A (+29d) | 0% → 100% | 95d → none |
| A44280 | Testing & Inspection | 2026-06-11 → 2026-10-26 (+137d) | 2026-06-13 → 2026-10-28 (+137d) |  | 89d → -12.1d |
| A44290 | Backfilling & Compaction | 2026-06-14 → 2026-11-16 (+155d) | 2026-06-17 → 2026-11-21 (+157d) |  | 89d → -28.1d |
| MH-2.12.0 / MH-2.12.1 | **MH-2.12.0 / MH-2.12.1** | 2026-06-02 → 2026-06-04 (+2d) | 2026-06-22 → 2026-11-25 (+156d) |  |  |
| A44300 | Excavation | 2026-06-02 → 2026-06-04 A (+2d) | 2026-06-06 → 2026-07-05 A (+29d) | 0% → 100% | 89d → none |
| A44310 | Pipe Laying | 2026-06-07 → 2026-06-04 A (-3d) | 2026-06-15 → 2026-07-05 A (+20d) | 0% → 100% | 89d → none |
| A44320 | Install Manhole | 2026-06-07 → 2026-06-04 A (-3d) | 2026-06-10 → 2026-07-05 A (+25d) | 0% → 100% | 95d → none |
| A44330 | Testing & Inspection | 2026-06-16 → 2026-10-26 (+132d) | 2026-06-17 → 2026-10-28 (+133d) |  | 89d → -8.1d |
| A44340 | Backfilling & Compaction | 2026-06-18 → 2026-11-21 (+156d) | 2026-06-22 → 2026-11-25 (+156d) |  | 89d → -28.1d |
| MH-2.13 / MH-2.14 | **MH-2.13 / MH-2.14** | 2026-06-07 → 2026-06-04 (-3d) | 2026-06-27 → 2026-11-30 (+156d) |  |  |
| A44350 | Excavation | 2026-06-07 → 2026-06-04 A (-3d) | 2026-06-10 → 2026-07-05 A (+25d) | 0% → 100% | 89d → none |
| A44360 | Pipe Laying | 2026-06-11 → 2026-06-04 A (-7d) | 2026-06-20 → 2026-07-05 A (+15d) | 0% → 100% | 89d → none |
| A44370 | Install Manhole | 2026-06-11 → 2026-06-04 A (-7d) | 2026-06-15 → 2026-07-05 A (+20d) | 0% → 100% | 95d → none |
| A44380 | Testing & Inspection | 2026-06-21 → 2026-10-26 (+127d) | 2026-06-22 → 2026-10-28 (+128d) |  | 89d → -4.1d |
| A44390 | Backfilling & Compaction | 2026-06-23 → 2026-11-25 (+155d) | 2026-06-27 → 2026-11-30 (+156d) |  | 89d → -28.1d |
| MH-2.13.0 / MH-2.13.1 | **MH-2.13.0 / MH-2.13.1** | 2026-06-11 → 2026-06-04 (-7d) | 2026-07-01 → 2026-12-05 (+157d) |  |  |
| A44400 | Excavation | 2026-06-11 → 2026-06-04 A (-7d) | 2026-06-15 → 2026-07-05 A (+20d) | 0% → 100% | 89d → none |
| A44410 | Pipe Laying | 2026-06-16 → 2026-06-04 A (-12d) | 2026-06-24 → 2026-07-05 A (+11d) | 0% → 100% | 89d → none |

| ID | Task | Start | Finish | Duration | Complete | Total float | Predecessors |
| --- | --- | --- | --- | --- | --- | --- | --- |
| A44420 | Install Manhole | 2026-06-16 → 2026-06-04 A (-12d) | 2026-06-20 → 2026-07-05 A (+15d) |  | 0% → 100% | 95d → none |  |
| A44430 | Testing & Inspection | 2026-06-25 → 2026-10-26 (+123d) | 2026-06-27 → 2026-10-28 (+123d) |  |  | 89d → -0.1d |  |
| A44440 | Backfilling & Compaction | 2026-06-28 → 2026-11-30 (+155d) | 2026-07-01 → 2026-12-05 (+157d) |  |  | 89d → -28.1d |  |
| MH-2.14 / MH-2.15 | **MH-2.14 / MH-2.15** | 2026-06-16 → 2026-06-04 (-12d) | 2026-07-06 → 2026-12-09 (+156d) |  |  |  |  |
| A44450 | Excavation | 2026-06-16 → 2026-06-04 A (-12d) | 2026-06-20 → 2026-07-05 A (+15d) |  | 0% → 100% | 89d → none |  |
| A44460 | Pipe Laying | 2026-06-21 → 2026-06-04 A (-17d) | 2026-06-29 → 2026-07-05 A (+6d) |  | 0% → 100% | 89d → none |  |
| A44470 | Install Manhole | 2026-06-21 → 2026-06-04 A (-17d) | 2026-06-24 → 2026-07-05 A (+11d) |  | 0% → 100% | 95d → none |  |
| A44480 | Testing & Inspection | 2026-06-30 → 2026-10-26 (+118d) | 2026-07-01 → 2026-10-28 (+119d) |  |  | 89d → 3.9d |  |
| A44490 | Backfilling & Compaction | 2026-07-02 → 2026-12-05 (+156d) | 2026-07-06 → 2026-12-09 (+156d) |  |  | 89d → -28.1d |  |
| MH-2.14.0 / MH-2.14.1 | **MH-2.14.0 / MH-2.14.1** | 2026-06-21 → 2026-06-04 (-17d) | 2026-07-11 → 2026-12-14 (+156d) |  |  |  |  |
| A44500 | Excavation | 2026-06-21 → 2026-06-04 A (-17d) | 2026-06-24 → 2026-07-05 A (+11d) |  | 0% → 100% | 89d → none |  |
| A44510 | Pipe Laying | 2026-06-25 → 2026-06-04 A (-21d) | 2026-06-29 → 2026-07-05 A (+6d) |  | 0% → 100% | 93d → none |  |
| A44520 | Install Manhole | 2026-06-25 → 2026-06-04 A (-21d) | 2026-06-29 → 2026-07-05 A (+6d) |  | 0% → 100% | 95d → none |  |
| A44530 | Testing & Inspection | 2026-06-30 → 2026-06-04 A (-26d) | 2026-07-01 → 2026-07-05 A (+4d) |  | 0% → 100% | 93d → none |  |
| A44540 | Backfilling & Compaction | 2026-07-07 → 2026-12-09 (+155d) | 2026-07-11 → 2026-12-14 (+156d) |  |  | 89d → -28.1d |  |
| MH-2.15 / MH-2.16 | **MH-2.15 / MH-2.16** | 2026-06-25 → 2026-06-04 (-21d) | 2026-07-15 → 2026-12-19 (+157d) |  |  |  |  |
| A44550 | Excavation | 2026-06-25 → 2026-06-04 A (-21d) | 2026-06-29 → 2026-07-05 A (+6d) |  | 0% → 100% | 89d → none |  |
| A44560 | Pipe Laying | 2026-06-30 → 2026-06-04 A (-26d) | 2026-07-08 → 2026-07-05 A (-3d) |  | 0% → 100% | 89d → none |  |
| A44570 | Install Manhole | 2026-06-30 → 2026-06-04 A (-26d) | 2026-07-04 → 2026-07-05 A (+1d) |  | 0% → 100% | 95d → none |  |
| A44580 | Testing & Inspection | 2026-07-09 → 2026-10-26 (+109d) | 2026-07-11 → 2026-10-28 (+109d) |  |  | 89d → 11.9d |  |
| A44590 | Backfilling & Compaction | 2026-07-12 → 2026-12-14 (+155d) | 2026-07-15 → 2026-12-19 (+157d) |  |  | 89d → -28.1d |  |
| MH-2.15.0 / MH-2.15.1 | **MH-2.15.0 / MH-2.15.1** | 2026-06-30 → 2026-06-04 (-26d) | 2026-07-20 → 2027-02-22 (+217d) |  |  |  |  |
| A44600 | Excavation | 2026-06-30 → 2026-06-04 A (-26d) | 2026-07-04 → 2026-07-05 A (+1d) |  | 0% → 100% | 89d → none |  |
| A44610 | Pipe Laying | 2026-07-05 → 2026-06-04 A (-31d) | 2026-07-13 → 2026-07-05 A (-8d) |  | 0% → 100% | 89d → none |  |
| A44620 | Install Manhole | 2026-07-05 → 2026-06-04 A (-31d) | 2026-07-08 → 2026-09-30 A (+84d) |  | 0% → 100% | 95d → none |  |
| A44640 | Backfilling & Compaction | 2026-07-16 → 2026-06-04 A (-42d) | 2026-07-20 → 2026-09-30 A (+72d) |  | 0% → 100% | 89d → none |  |
| A44630 | Testing & Inspection | 2026-07-14 → 2026-10-26 (+104d) | 2026-07-15 → 2027-02-22 (+222d) | 2d → 102d |  | 89d → -84.1d |  |
| MH-2.16 / MH-2.17 | **MH-2.16 / MH-2.17** | 2026-07-05 → 2026-06-04 (-31d) | 2026-07-25 → 2027-02-22 (+212d) |  |  |  |  |
| A44650 | Excavation | 2026-07-05 → 2026-06-04 A (-31d) | 2026-07-08 → 2026-07-05 A (-3d) |  | 0% → 100% | 89d → none |  |
| A44660 | Pipe Laying | 2026-07-09 → 2026-06-04 A (-35d) | 2026-07-18 → 2026-07-05 A (-13d) |  | 0% → 100% | 89d → none |  |
| A44670 | Install Manhole | 2026-07-09 → 2026-06-04 A (-35d) | 2026-07-13 → 2026-09-30 A (+79d) |  | 0% → 100% | 95d → none |  |
| A44690 | Backfilling & Compaction | 2026-07-21 → 2026-06-04 A (-47d) | 2026-07-25 → 2026-09-30 A (+67d) |  | 0% → 100% | 89d → none |  |
| A44680 | Testing & Inspection | 2026-07-19 → 2026-10-26 (+99d) | 2026-07-20 → 2027-02-22 (+217d) | 2d → 102d |  | 89d → -84.1d |  |
| MH-2.16.0 / MH-2.16.1 | **MH-2.16.0 / MH-2.16.1** | 2026-07-09 → 2026-06-04 (-35d) | 2026-07-29 → 2026-10-28 (+91d) |  |  |  |  |
| A44700 | Excavation | 2026-07-09 → 2026-06-04 A (-35d) | 2026-07-13 → 2026-07-05 A (-8d) |  | 0% → 100% | 89d → none |  |
| A44710 | Pipe Laying | 2026-07-14 → 2026-06-04 A (-40d) | 2026-07-22 → 2026-07-05 A (-17d) |  | 0% → 100% | 89d → none |  |
| A44720 | Install Manhole | 2026-07-14 → 2026-06-04 A (-40d) | 2026-07-18 → 2026-09-30 A (+74d) |  | 0% → 100% | 95d → none | A44700 → A44700, A11080 |
| A44740 | Backfilling & Compaction | 2026-07-26 → 2026-06-04 A (-52d) | 2026-07-29 → 2026-09-30 A (+63d) |  | 0% → 100% | 89d → none |  |
| A44730 | Testing & Inspection | 2026-07-23 → 2026-10-26 (+95d) | 2026-07-25 → 2026-10-28 (+95d) |  |  | 89d → 15.9d |  |
| LR 06 | **LR 06** | 2026-06-02 → 2026-06-04 (+2d) | 2026-08-17 → 2026-12-09 (+114d) |  |  |  |  |
| MH-2.8.0 / MH-2.8.1 | **MH-2.8.0 / MH-2.8.1** | 2026-06-02 → 2026-06-04 (+2d) | 2026-06-22 → 2026-07-05 (+13d) |  |  |  |  |
| A44750 | Excavation | 2026-06-02 → 2026-06-04 A (+2d) | 2026-06-06 → 2026-07-05 A (+29d) |  | 0% → 100% | 2d → none |  |
| A44760 | Pipe Laying | 2026-06-07 → 2026-06-04 A (-3d) | 2026-06-15 → 2026-07-05 A (+20d) |  | 0% → 100% | 2d → none |  |
| A44770 | Install Manhole | 2026-06-07 → 2026-06-04 A (-3d) | 2026-06-10 → 2026-07-05 A (+25d) |  | 0% → 100% | 8d → none |  |
| A44780 | Testing & Inspection | 2026-06-16 → 2026-06-04 A (-12d) | 2026-06-17 → 2026-07-05 A (+18d) |  | 0% → 100% | 2d → none |  |
| A44790 | Backfilling & Compaction | 2026-06-18 → 2026-06-04 A (-14d) | 2026-06-22 → 2026-07-05 A (+13d) |  | 0% → 100% | 2d → none |  |
| MH-2.8.1 / MH-2.8.2 | **MH-2.8.1 / MH-2.8.2** | 2026-06-07 → 2026-06-04 (-3d) | 2026-06-27 → 2026-07-05 (+8d) |  |  |  |  |
| A44800 | Excavation | 2026-06-07 → 2026-06-04 A (-3d) | 2026-06-10 → 2026-07-05 A (+25d) |  | 0% → 100% | 2d → none |  |
| A44810 | Pipe Laying | 2026-06-11 → 2026-06-04 A (-7d) | 2026-06-20 → 2026-07-05 A (+15d) |  | 0% → 100% | 2d → none |  |
| A44820 | Install Manhole | 2026-06-11 → 2026-06-04 A (-7d) | 2026-06-15 → 2026-07-05 A (+20d) |  | 0% → 100% | 8d → none |  |
| A44830 | Testing & Inspection | 2026-06-21 → 2026-06-04 A (-17d) | 2026-06-22 → 2026-07-05 A (+13d) |  | 0% → 100% | 2d → none |  |
| A44840 | Backfilling & Compaction | 2026-06-23 → 2026-06-04 A (-19d) | 2026-06-27 → 2026-07-05 A (+8d) |  | 0% → 100% | 2d → none |  |
| MH-2.8.1.0 / MH-2.8.1.1 | **MH-2.8.1.0 / MH-2.8.1.1** | 2026-06-11 → 2026-06-04 (-7d) | 2026-07-01 → 2026-11-02 (+124d) |  |  |  |  |
| A44850 | Excavation | 2026-06-11 → 2026-06-04 A (-7d) | 2026-06-15 → 2026-07-05 A (+20d) |  | 0% → 100% | 2d → none |  |
| A44860 | Pipe Laying | 2026-06-16 → 2026-09-13 A (+89d) | 2026-06-24 → 2026-09-29 A (+97d) |  | 0% → 100% | 2d → none |  |
| A44870 | Install Manhole | 2026-06-16 → 2026-09-13 A (+89d) | 2026-06-20 → 2026-09-29 A (+101d) |  | 0% → 100% | 8d → none |  |
| A44880 | Testing & Inspection | 2026-06-25 → 2026-10-26 (+123d) | 2026-06-27 → 2026-10-28 (+123d) |  |  | 2d → -89.3d |  |
| A44890 | Backfilling & Compaction | 2026-06-28 → 2026-10-28 (+122d) | 2026-07-01 → 2026-11-02 (+124d) |  |  | 2d → -89.3d |  |
| MH-2.8.2 / MH-2.8.3 | **MH-2.8.2 / MH-2.8.3** | 2026-06-16 → 2026-06-04 (-12d) | 2026-07-06 → 2026-07-05 (-1d) |  |  |  |  |
| A44900 | Excavation | 2026-06-16 → 2026-06-04 A (-12d) | 2026-06-20 → 2026-07-05 A (+15d) |  | 0% → 100% | 2d → none |  |
| A44910 | Pipe Laying | 2026-06-21 → 2026-06-04 A (-17d) | 2026-06-29 → 2026-07-05 A (+6d) |  | 0% → 100% | 2d → none |  |
| A44920 | Install Manhole | 2026-06-21 → 2026-06-04 A (-17d) | 2026-06-24 → 2026-07-05 A (+11d) |  | 0% → 100% | 8d → none |  |
| A44930 | Testing & Inspection | 2026-06-30 → 2026-06-04 A (-26d) | 2026-07-01 → 2026-07-05 A (+4d) |  | 0% → 100% | 2d → none |  |
| A44940 | Backfilling & Compaction | 2026-07-02 → 2026-06-04 A (-28d) | 2026-07-06 → 2026-07-05 A (-1d) |  | 0% → 100% | 2d → none |  |
| MH-2.8.2.0 / MH-2.8.2.1 | **MH-2.8.2.0 / MH-2.8.2.1** | 2026-06-21 → 2026-06-04 (-17d) | 2026-07-11 → 2026-11-11 (+123d) |  |  |  |  |
| A44950 | Excavation | 2026-06-21 → 2026-06-04 A (-17d) | 2026-06-24 → 2026-07-05 A (+11d) |  | 0% → 100% | 2d → none |  |
| A44960 | Pipe Laying | 2026-06-25 → 2026-10-26 (+123d) | 2026-07-04 → 2026-11-04 (+123d) |  |  | 2d → -93.3d |  |
| A44970 | Install Manhole | 2026-06-25 → 2026-10-26 (+123d) | 2026-06-29 → 2026-10-31 (+124d) |  |  | 8d → -87.3d |  |
| A44980 | Testing & Inspection | 2026-07-05 → 2026-11-04 (+122d) | 2026-07-06 → 2026-11-07 (+124d) |  |  | 2d → -93.3d |  |
| A44990 | Backfilling & Compaction | 2026-07-07 → 2026-11-07 (+123d) | 2026-07-11 → 2026-11-11 (+123d) |  |  | 2d → -93.3d |  |

| ID | Task | Start | Finish | Complete | Total float |
| --- | --- | --- | --- | --- | --- |
| MH-2.8.3 / MH-2.8.4 | **MH-2.8.3 / MH-2.8.4** | 2026-06-25 → 2026-06-04 (-21d) | 2026-07-15 → 2026-07-05 (-10d) |  |  |
| A45000 | Excavation | 2026-06-25 → 2026-06-04 A (-21d) | 2026-06-29 → 2026-07-05 A (+6d) | 0% → 100% | 2d → none |
| A45010 | Pipe Laying | 2026-06-30 → 2026-06-04 A (-26d) | 2026-07-08 → 2026-07-05 A (-3d) | 0% → 100% | 2d → none |
| A45020 | Install Manhole | 2026-06-30 → 2026-06-04 A (-26d) | 2026-07-04 → 2026-07-05 A (+1d) | 0% → 100% | 8d → none |
| A45030 | Testing & Inspection | 2026-07-09 → 2026-06-04 A (-35d) | 2026-07-11 → 2026-07-05 A (-6d) | 0% → 100% | 2d → none |
| A45040 | Backfilling & Compaction | 2026-07-12 → 2026-06-04 A (-38d) | 2026-07-15 → 2026-07-05 A (-10d) | 0% → 100% | 2d → none |
| MH-2.8.3.0 / MH-2.8.3.1 | **MH-2.8.3.0 / MH-2.8.3.1** | 2026-06-30 → 2026-06-04 (-26d) | 2026-07-20 → 2026-11-16 (+119d) |  |  |
| A45050 | Excavation | 2026-06-30 → 2026-06-04 A (-26d) | 2026-07-04 → 2026-07-05 A (+1d) | 0% → 100% | 2d → none |
| A45060 | Pipe Laying | 2026-07-05 → 2026-10-26 (+113d) | 2026-07-13 → 2026-11-04 (+114d) |  | 2d → -89.3d |
| A45070 | Install Manhole | 2026-07-05 → 2026-10-26 (+113d) | 2026-07-08 → 2026-10-31 (+115d) |  | 8d → -83.3d |
| A45080 | Testing & Inspection | 2026-07-14 → 2026-11-04 (+113d) | 2026-07-15 → 2026-11-07 (+115d) |  | 2d → -89.3d |
| A45090 | Backfilling & Compaction | 2026-07-16 → 2026-11-11 (+118d) | 2026-07-20 → 2026-11-16 (+119d) |  | 2d → -93.3d |
| MH-2.8.4 / MH-2.8.5 | **MH-2.8.4 / MH-2.8.5** | 2026-07-05 → 2026-06-04 (-31d) | 2026-07-25 → 2026-11-21 (+119d) |  |  |
| A45100 | Excavation | 2026-07-05 → 2026-06-04 A (-31d) | 2026-07-08 → 2026-07-05 A (-3d) | 0% → 100% | 2d → none |
| A45110 | Pipe Laying | 2026-07-09 → 2026-10-26 (+109d) | 2026-07-18 → 2026-11-04 (+109d) |  | 2d → -85.3d |
| A45120 | Install Manhole | 2026-07-09 → 2026-10-26 (+109d) | 2026-07-13 → 2026-10-31 (+110d) |  | 8d → -79.3d |
| A45130 | Testing & Inspection | 2026-07-19 → 2026-11-04 (+108d) | 2026-07-20 → 2026-11-07 (+110d) |  | 2d → -85.3d |
| A45140 | Backfilling & Compaction | 2026-07-21 → 2026-11-16 (+118d) | 2026-07-25 → 2026-11-21 (+119d) |  | 2d → -93.3d |
| MH-2.8.4.0 / MH-2.8.4.1 | **MH-2.8.4.0 / MH-2.8.4.1** | 2026-07-09 → 2026-06-04 (-35d) | 2026-07-29 → 2026-11-25 (+119d) |  |  |
| A45150 | Excavation | 2026-07-09 → 2026-06-04 A (-35d) | 2026-07-13 → 2026-07-05 A (-8d) | 0% → 100% | 2d → none |
| A45160 | Pipe Laying | 2026-07-14 → 2026-10-26 (+104d) | 2026-07-18 → 2026-10-31 (+105d) |  | 6d → -77.3d |
| A45170 | Install Manhole | 2026-07-14 → 2026-10-26 (+104d) | 2026-07-18 → 2026-10-31 (+105d) |  | 8d → -75.3d |
| A45180 | Testing & Inspection | 2026-07-19 → 2026-10-31 (+104d) | 2026-07-20 → 2026-11-02 (+105d) |  | 6d → -77.3d |
| A45190 | Backfilling & Compaction | 2026-07-26 → 2026-11-21 (+118d) | 2026-07-29 → 2026-11-25 (+119d) |  | 2d → -93.3d |
| MH-2.8.5 / MH-2.8.6 | **MH-2.8.5 / MH-2.8.6** | 2026-07-14 → 2026-06-04 (-40d) | 2026-08-03 → 2026-11-30 (+119d) |  |  |
| A45200 | Excavation | 2026-07-14 → 2026-06-04 A (-40d) | 2026-07-18 → 2026-07-05 A (-13d) | 0% → 100% | 2d → none |
| A45210 | Pipe Laying | 2026-07-19 → 2026-10-26 (+99d) | 2026-07-27 → 2026-11-04 (+100d) |  | 2d → -77.3d |
| A45220 | Install Manhole | 2026-07-19 → 2026-10-26 (+99d) | 2026-07-22 → 2026-10-31 (+101d) |  | 8d → -71.3d |
| A45230 | Testing & Inspection | 2026-07-28 → 2026-11-04 (+99d) | 2026-07-29 → 2026-11-07 (+101d) |  | 2d → -77.3d |
| A45240 | Backfilling & Compaction | 2026-07-30 → 2026-11-25 (+118d) | 2026-08-03 → 2026-11-30 (+119d) |  | 2d → -93.3d |
| MH-2.8.5.0 / MH-2.8.5.1 | **MH-2.8.5.0 / MH-2.8.5.1** | 2026-07-19 → 2026-06-04 (-45d) | 2026-08-08 → 2026-12-05 (+119d) |  |  |
| A45250 | Excavation | 2026-07-19 → 2026-06-04 A (-45d) | 2026-07-22 → 2026-07-05 A (-17d) | 0% → 100% | 2d → none |
| A45260 | Pipe Laying | 2026-07-23 → 2026-10-26 (+95d) | 2026-08-01 → 2026-11-04 (+95d) |  | 2d → -73.3d |
| A45270 | Install Manhole | 2026-07-23 → 2026-10-26 (+95d) | 2026-07-27 → 2026-10-31 (+96d) |  | 8d → -67.3d |
| A45280 | Testing & Inspection | 2026-08-02 → 2026-11-04 (+94d) | 2026-08-03 → 2026-11-07 (+96d) |  | 2d → -73.3d |
| A45290 | Backfilling & Compaction | 2026-08-04 → 2026-11-30 (+118d) | 2026-08-08 → 2026-12-05 (+119d) |  | 2d → -93.3d |
| MH-2.8.6 / MH-2.8.7 | **MH-2.8.6 / MH-2.8.7** | 2026-07-23 → 2026-06-04 (-49d) | 2026-08-12 → 2026-07-05 (-38d) |  |  |
| A45300 | Excavation | 2026-07-23 → 2026-06-04 A (-49d) | 2026-07-27 → 2026-07-05 A (-22d) | 0% → 100% | 2d → none |
| A45310 | Pipe Laying | 2026-07-28 → 2026-06-04 A (-54d) | 2026-08-05 → 2026-07-05 A (-31d) | 0% → 100% | 2d → none |
| A45320 | Install Manhole | 2026-07-28 → 2026-06-04 A (-54d) | 2026-08-01 → 2026-07-05 A (-27d) | 0% → 100% | 8d → none |
| A45330 | Testing & Inspection | 2026-08-06 → 2026-06-04 A (-63d) | 2026-08-08 → 2026-07-05 A (-34d) | 0% → 100% | 2d → none |
| A45340 | Backfilling & Compaction | 2026-08-09 → 2026-06-04 A (-66d) | 2026-08-12 → 2026-07-05 A (-38d) | 0% → 100% | 2d → none |
| MH-2.8.6.0 / MH-2.8.6.1 | **MH-2.8.6.0 / MH-2.8.6.1** | 2026-07-28 → 2026-06-04 (-54d) | 2026-08-17 → 2026-12-09 (+114d) |  |  |
| A45350 | Excavation | 2026-07-28 → 2026-06-04 A (-54d) | 2026-08-01 → 2026-07-05 A (-27d) | 0% → 100% | 2d → none |
| A45360 | Pipe Laying | 2026-08-02 → 2026-10-26 (+85d) | 2026-08-10 → 2026-11-04 (+86d) |  | 2d → -69.3d |
| A45370 | Install Manhole | 2026-08-02 → 2026-10-26 (+85d) | 2026-08-05 → 2026-10-31 (+87d) |  | 8d → -63.3d |
| A45380 | Testing & Inspection | 2026-08-11 → 2026-11-04 (+85d) | 2026-08-12 → 2026-11-07 (+87d) |  | 2d → -69.3d |
| A45390 | Backfilling & Compaction | 2026-08-13 → 2026-12-05 (+114d) | 2026-08-17 → 2026-12-09 (+114d) |  | 2d → -93.3d |
| LR 07 | **LR 07** | 2026-06-08 → 2026-06-04 (-4d) | 2026-08-18 → 2026-08-05 (-13d) |  |  |
| MH-1.12.3.3.0 / MH-1.12.3.3.0 | **MH-1.12.3.3.0 / MH-1.12.3.3.0** | 2026-06-08 → 2026-06-04 (-4d) | 2026-06-28 → 2026-07-05 (+7d) |  |  |
| A45400 | Excavation | 2026-06-08 → 2026-06-04 A (-4d) | 2026-06-11 → 2026-07-05 A (+24d) | 0% → 100% | 69d → none |
| A45410 | Pipe Laying | 2026-06-13 → 2026-06-04 A (-9d) | 2026-06-21 → 2026-07-05 A (+14d) | 0% → 100% | 69d → none |
| A45420 | Install Manhole | 2026-06-13 → 2026-06-04 A (-9d) | 2026-06-16 → 2026-07-05 A (+19d) | 0% → 100% | 75d → none |
| A45430 | Testing & Inspection | 2026-06-22 → 2026-06-04 A (-18d) | 2026-06-23 → 2026-07-05 A (+12d) | 0% → 100% | 69d → none |
| A45440 | Backfilling & Compaction | 2026-06-24 → 2026-06-04 A (-20d) | 2026-06-28 → 2026-07-05 A (+7d) | 0% → 100% | 69d → none |
| MH-1.12.3.2 / MH-1.12.3.3 | **MH-1.12.3.2 / MH-1.12.3.3** | 2026-06-13 → 2026-06-04 (-9d) | 2026-07-02 → 2026-07-05 (+3d) |  |  |
| A45450 | Excavation | 2026-06-13 → 2026-06-04 A (-9d) | 2026-06-16 → 2026-07-05 A (+19d) | 0% → 100% | 69d → none |
| A45460 | Pipe Laying | 2026-06-17 → 2026-06-04 A (-13d) | 2026-06-25 → 2026-07-05 A (+10d) | 0% → 100% | 69d → none |
| A45470 | Install Manhole | 2026-06-17 → 2026-06-04 A (-13d) | 2026-06-21 → 2026-07-05 A (+14d) | 0% → 100% | 75d → none |
| A45480 | Testing & Inspection | 2026-06-27 → 2026-06-04 A (-23d) | 2026-06-28 → 2026-07-05 A (+7d) | 0% → 100% | 69d → none |
| A45490 | Backfilling & Compaction | 2026-06-29 → 2026-06-04 A (-25d) | 2026-07-02 → 2026-07-05 A (+3d) | 0% → 100% | 69d → none |
| MH-1.12.3.3 / MH-1.12.3.4 | **MH-1.12.3.3 / MH-1.12.3.4** | 2026-06-17 → 2026-06-04 (-13d) | 2026-07-07 → 2026-07-05 (-2d) |  |  |
| A45500 | Excavation | 2026-06-17 → 2026-06-04 A (-13d) | 2026-06-21 → 2026-07-05 A (+14d) | 0% → 100% | 69d → none |
| A45510 | Pipe Laying | 2026-06-22 → 2026-06-04 A (-18d) | 2026-06-30 → 2026-07-05 A (+5d) | 0% → 100% | 69d → none |
| A45520 | Install Manhole | 2026-06-22 → 2026-06-04 A (-18d) | 2026-06-25 → 2026-07-05 A (+10d) | 0% → 100% | 75d → none |
| A45530 | Testing & Inspection | 2026-07-01 → 2026-06-04 A (-27d) | 2026-07-02 → 2026-07-05 A (+3d) | 0% → 100% | 69d → none |
| A45540 | Backfilling & Compaction | 2026-07-04 → 2026-06-04 A (-30d) | 2026-07-07 → 2026-07-05 A (-2d) | 0% → 100% | 69d → none |
| MH-1.12.3.4 / MH-1.12.3.5 | **MH-1.12.3.4 / MH-1.12.3.5** | 2026-07-25 → 2026-06-04 (-51d) | 2026-08-13 → 2026-07-05 (-39d) |  |  |
| A45900 | Excavation | 2026-07-25 → 2026-06-04 A (-51d) | 2026-07-28 → 2026-07-05 A (-23d) | 0% → 100% | 69d → none |
| A45910 | Pipe Laying | 2026-07-29 → 2026-06-04 A (-55d) | 2026-08-06 → 2026-07-05 A (-32d) | 0% → 100% | 69d → none |

| ID | Task | Start | Finish | Complete | Total float |
| --- | --- | --- | --- | --- | --- |
| A45920 | Install Manhole | 2026-07-29 → 2026-06-04 A (-55d) | 2026-08-02 → 2026-07-05 A (-28d) | 0% → 100% | 75d → none |
| A45930 | Testing & Inspection | 2026-08-08 → 2026-06-04 A (-65d) | 2026-08-09 → 2026-07-05 A (-35d) | 0% → 100% | 69d → none |
| A45940 | Backfilling & Compaction | 2026-08-10 → 2026-06-04 A (-67d) | 2026-08-13 → 2026-07-05 A (-39d) | 0% → 100% | 69d → none |
| MH-2.6.1 / MH-2.6.2 | **MH-2.6.1 / MH-2.6.2** | 2026-06-22 → 2026-06-04 (-18d) | 2026-07-12 → 2026-07-05 (-7d) |  |  |
| A45550 | Excavation | 2026-06-22 → 2026-06-04 A (-18d) | 2026-06-25 → 2026-07-05 A (+10d) | 0% → 100% | 69d → none |
| A45560 | Pipe Laying | 2026-06-27 → 2026-06-04 A (-23d) | 2026-07-05 A | 0% → 100% | 69d → none |
| A45570 | Install Manhole | 2026-06-27 → 2026-06-04 A (-23d) | 2026-06-30 → 2026-07-05 A (+5d) | 0% → 100% | 75d → none |
| A45580 | Testing & Inspection | 2026-07-06 → 2026-06-04 A (-32d) | 2026-07-07 → 2026-07-05 A (-2d) | 0% → 100% | 69d → none |
| A45590 | Backfilling & Compaction | 2026-07-08 → 2026-06-04 A (-34d) | 2026-07-12 → 2026-07-05 A (-7d) | 0% → 100% | 69d → none |
| MH-2.6.1.0 / MH-2.6.1.1 | **MH-2.6.1.0 / MH-2.6.1.1** | 2026-06-27 → 2026-06-04 (-23d) | 2026-07-16 → 2026-07-05 (-11d) |  |  |
| A45600 | Excavation | 2026-06-27 → 2026-06-04 A (-23d) | 2026-06-30 → 2026-07-05 A (+5d) | 0% → 100% | 69d → none |
| A45610 | Pipe Laying | 2026-07-01 → 2026-06-04 A (-27d) | 2026-07-09 → 2026-07-05 A (-4d) | 0% → 100% | 69d → none |
| A45620 | Install Manhole | 2026-07-01 → 2026-06-04 A (-27d) | 2026-07-05 A | 0% → 100% | 75d → none |
| A45630 | Testing & Inspection | 2026-07-11 → 2026-06-04 A (-37d) | 2026-07-12 → 2026-07-05 A (-7d) | 0% → 100% | 69d → none |
| A45640 | Backfilling & Compaction | 2026-07-13 → 2026-06-04 A (-39d) | 2026-07-16 → 2026-07-05 A (-11d) | 0% → 100% | 69d → none |
| MH-2.6.2 / MH-2.6.3 | **MH-2.6.2 / MH-2.6.3** | 2026-07-01 → 2026-06-04 (-27d) | 2026-07-21 → 2026-07-05 (-16d) |  |  |
| A45650 | Excavation | 2026-07-01 → 2026-06-04 A (-27d) | 2026-07-05 A | 0% → 100% | 69d → none |
| A45660 | Pipe Laying | 2026-07-06 → 2026-06-04 A (-32d) | 2026-07-14 → 2026-07-05 A (-9d) | 0% → 100% | 69d → none |
| A45670 | Install Manhole | 2026-07-06 → 2026-06-04 A (-32d) | 2026-07-09 → 2026-07-05 A (-4d) | 0% → 100% | 75d → none |
| A45680 | Testing & Inspection | 2026-07-15 → 2026-06-04 A (-41d) | 2026-07-16 → 2026-07-05 A (-11d) | 0% → 100% | 69d → none |
| A45690 | Backfilling & Compaction | 2026-07-18 → 2026-06-04 A (-44d) | 2026-07-21 → 2026-07-05 A (-16d) | 0% → 100% | 69d → none |
| MH-2.6.2.0 / MH-2.6.2.1 | **MH-2.6.2.0 / MH-2.6.2.1** | 2026-07-06 → 2026-06-04 (-32d) | 2026-07-26 → 2026-07-05 (-21d) |  |  |
| A45700 | Excavation | 2026-07-06 → 2026-06-04 A (-32d) | 2026-07-09 → 2026-07-05 A (-4d) | 0% → 100% | 69d → none |
| A45710 | Pipe Laying | 2026-07-11 → 2026-06-04 A (-37d) | 2026-07-19 → 2026-07-05 A (-14d) | 0% → 100% | 69d → none |
| A45720 | Install Manhole | 2026-07-11 → 2026-06-04 A (-37d) | 2026-07-14 → 2026-07-05 A (-9d) | 0% → 100% | 75d → none |
| A45730 | Testing & Inspection | 2026-07-20 → 2026-06-04 A (-46d) | 2026-07-21 → 2026-07-05 A (-16d) | 0% → 100% | 69d → none |
| A45740 | Backfilling & Compaction | 2026-07-22 → 2026-06-04 A (-48d) | 2026-07-26 → 2026-07-05 A (-21d) | 0% → 100% | 69d → none |
| MH-2.6.3 / MH-2.6.4 | **MH-2.6.3 / MH-2.6.4** | 2026-07-11 → 2026-06-04 (-37d) | 2026-07-30 → 2026-07-05 (-25d) |  |  |
| A45750 | Excavation | 2026-07-11 → 2026-06-04 A (-37d) | 2026-07-14 → 2026-07-05 A (-9d) | 0% → 100% | 69d → none |
| A45760 | Pipe Laying | 2026-07-15 → 2026-06-04 A (-41d) | 2026-07-23 → 2026-07-05 A (-18d) | 0% → 100% | 69d → none |
| A45770 | Install Manhole | 2026-07-15 → 2026-06-04 A (-41d) | 2026-07-19 → 2026-07-05 A (-14d) | 0% → 100% | 75d → none |
| A45780 | Testing & Inspection | 2026-07-25 → 2026-06-04 A (-51d) | 2026-07-26 → 2026-07-05 A (-21d) | 0% → 100% | 69d → none |
| A45790 | Backfilling & Compaction | 2026-07-27 → 2026-06-04 A (-53d) | 2026-07-30 → 2026-07-05 A (-25d) | 0% → 100% | 69d → none |
| MH-2.6.3.0 / MH-2.6.3.1 | **MH-2.6.3.0 / MH-2.6.3.1** | 2026-07-15 → 2026-07-04 (-11d) | 2026-08-04 → 2026-08-05 (+1d) |  |  |
| A45800 | Excavation | 2026-07-15 → 2026-07-04 A (-11d) | 2026-07-19 → 2026-08-05 A (+17d) | 0% → 100% | 69d → none |
| A45810 | Pipe Laying | 2026-07-20 → 2026-07-04 A (-16d) | 2026-07-28 → 2026-08-05 A (+8d) | 0% → 100% | 69d → none |
| A45820 | Install Manhole | 2026-07-20 → 2026-07-04 A (-16d) | 2026-07-23 → 2026-08-05 A (+13d) | 0% → 100% | 75d → none |
| A45830 | Testing & Inspection | 2026-07-29 → 2026-07-04 A (-25d) | 2026-07-30 → 2026-08-05 A (+6d) | 0% → 100% | 69d → none |
| A45840 | Backfilling & Compaction | 2026-08-01 → 2026-07-04 A (-28d) | 2026-08-04 → 2026-08-05 A (+1d) | 0% → 100% | 69d → none |
| MH-2.6.4 / MH-2.6.5 | **MH-2.6.4 / MH-2.6.5** | 2026-07-20 → 2026-06-04 (-46d) | 2026-08-09 → 2026-07-05 (-35d) |  |  |
| A45850 | Excavation | 2026-07-20 → 2026-06-04 A (-46d) | 2026-07-23 → 2026-07-05 A (-18d) | 0% → 100% | 69d → none |
| A45860 | Pipe Laying | 2026-07-25 → 2026-06-04 A (-51d) | 2026-08-02 → 2026-07-05 A (-28d) | 0% → 100% | 69d → none |
| A45870 | Install Manhole | 2026-07-25 → 2026-06-04 A (-51d) | 2026-07-28 → 2026-07-05 A (-23d) | 0% → 100% | 75d → none |
| A45880 | Testing & Inspection | 2026-08-03 → 2026-06-04 A (-60d) | 2026-08-04 → 2026-07-05 A (-30d) | 0% → 100% | 69d → none |
| A45890 | Backfilling & Compaction | 2026-08-05 → 2026-06-04 A (-62d) | 2026-08-09 → 2026-07-05 A (-35d) | 0% → 100% | 69d → none |
| MH-2.6.0 / MH-2.6.1 | **MH-2.6.0 / MH-2.6.1** | 2026-07-29 → 2026-06-04 (-55d) | 2026-08-18 → 2026-08-05 (-13d) |  |  |
| A45950 | Excavation | 2026-07-29 → 2026-06-04 A (-55d) | 2026-08-02 → 2026-07-05 A (-28d) | 0% → 100% | 69d → none |
| A45960 | Pipe Laying | 2026-08-03 → 2026-07-04 A (-30d) | 2026-08-11 → 2026-08-05 A (-6d) | 0% → 100% | 69d → none |
| A45970 | Install Manhole | 2026-08-03 → 2026-07-04 A (-30d) | 2026-08-06 → 2026-08-05 A (-1d) | 0% → 100% | 75d → none |
| A45980 | Testing & Inspection | 2026-08-12 → 2026-07-04 A (-39d) | 2026-08-13 → 2026-08-05 A (-8d) | 0% → 100% | 69d → none |
| A45990 | Backfilling & Compaction | 2026-08-15 → 2026-07-04 A (-42d) | 2026-08-18 → 2026-08-05 A (-13d) | 0% → 100% | 69d → none |
| LR 08 | **LR 08** | 2026-06-27 → 2026-07-04 (+7d) | 2026-09-06 → 2026-08-05 (-32d) |  |  |
| MH-1.12.3 / MH-1.12.4 | **MH-1.12.3 / MH-1.12.4** | 2026-06-27 → 2026-07-04 (+7d) | 2026-07-16 → 2026-08-05 (+20d) |  |  |
| A46000 | Excavation | 2026-06-27 → 2026-07-04 A (+7d) | 2026-06-30 → 2026-08-05 A (+36d) | 0% → 100% | 40d → none |
| A46010 | Pipe Laying | 2026-07-01 → 2026-07-04 A (+3d) | 2026-07-09 → 2026-08-05 A (+27d) | 0% → 100% | 40d → none |
| A46020 | Install Manhole | 2026-07-01 → 2026-07-04 A (+3d) | 2026-07-05 → 2026-08-05 A (+31d) | 0% → 100% | 46d → none |
| A46030 | Testing & Inspection | 2026-07-11 → 2026-07-04 A (-7d) | 2026-07-12 → 2026-08-05 A (+24d) | 0% → 100% | 40d → none |
| A46040 | Backfilling & Compaction | 2026-07-13 → 2026-07-04 A (-9d) | 2026-07-16 → 2026-08-05 A (+20d) | 0% → 100% | 40d → none |
| MH-1.12.4 / MH-1.12.5 | **MH-1.12.4 / MH-1.12.5** | 2026-07-01 → 2026-07-04 (+3d) | 2026-07-21 → 2026-08-05 (+15d) |  |  |
| A46050 | Excavation | 2026-07-01 → 2026-07-04 A (+3d) | 2026-07-05 → 2026-08-05 A (+31d) | 0% → 100% | 40d → none |
| A46060 | Pipe Laying | 2026-07-06 → 2026-07-04 A (-2d) | 2026-07-14 → 2026-08-05 A (+22d) | 0% → 100% | 40d → none |
| A46070 | Install Manhole | 2026-07-06 → 2026-07-04 A (-2d) | 2026-07-09 → 2026-08-05 A (+27d) | 0% → 100% | 46d → none |
| A46080 | Testing & Inspection | 2026-07-15 → 2026-07-04 A (-11d) | 2026-07-16 → 2026-08-05 A (+20d) | 0% → 100% | 40d → none |
| A46090 | Backfilling & Compaction | 2026-07-18 → 2026-07-04 A (-14d) | 2026-07-21 → 2026-08-05 A (+15d) | 0% → 100% | 40d → none |
| MH-1.12.4.0 / MH-1.12.4.1 | **MH-1.12.4.0 / MH-1.12.4.1** | 2026-07-06 → 2026-07-04 (-2d) | 2026-07-26 → 2026-08-05 (+10d) |  |  |
| A46100 | Excavation | 2026-07-06 → 2026-07-04 A (-2d) | 2026-07-09 → 2026-08-05 A (+27d) | 0% → 100% | 40d → none |
| A46110 | Pipe Laying | 2026-07-11 → 2026-07-04 A (-7d) | 2026-07-19 → 2026-08-05 A (+17d) | 0% → 100% | 40d → none |
| A46120 | Install Manhole | 2026-07-11 → 2026-07-04 A (-7d) | 2026-07-14 → 2026-08-05 A (+22d) | 0% → 100% | 46d → none |
| A46130 | Testing & Inspection | 2026-07-20 → 2026-07-04 A (-16d) | 2026-07-21 → 2026-08-05 A (+15d) | 0% → 100% | 40d → none |
| A46140 | Backfilling & Compaction | 2026-07-22 → 2026-07-04 A (-18d) | 2026-07-26 → 2026-08-05 A (+10d) | 0% → 100% | 40d → none |

| ID | Task | Start | Finish | Complete | Total float |
| --- | --- | --- | --- | --- | --- |
| MH-1.12.5 / MH-1.12.6 | **MH-1.12.5 / MH-1.12.6** | 2026-07-11 → 2026-07-04 (-7d) | 2026-07-30 → 2026-08-05 (+6d) |  |  |
| A46150 | Excavation | 2026-07-11 → 2026-07-04 A (-7d) | 2026-07-14 → 2026-08-05 A (+22d) | 0% → 100% | 40d → none |
| A46160 | Pipe Laying | 2026-07-15 → 2026-07-04 A (-11d) | 2026-07-23 → 2026-08-05 A (+13d) | 0% → 100% | 40d → none |
| A46170 | Install Manhole | 2026-07-15 → 2026-07-04 A (-11d) | 2026-07-19 → 2026-08-05 A (+17d) | 0% → 100% | 46d → none |
| A46180 | Testing & Inspection | 2026-07-25 → 2026-07-04 A (-21d) | 2026-07-26 → 2026-08-05 A (+10d) | 0% → 100% | 40d → none |
| A46190 | Backfilling & Compaction | 2026-07-27 → 2026-07-04 A (-23d) | 2026-07-30 → 2026-08-05 A (+6d) | 0% → 100% | 40d → none |
| MH-1.12.5.0 / MH-1.12.5.1 | **MH-1.12.5.0 / MH-1.12.5.1** | 2026-07-15 → 2026-07-04 (-11d) | 2026-08-04 → 2026-08-05 (+1d) |  |  |
| A46200 | Excavation | 2026-07-15 → 2026-07-04 A (-11d) | 2026-07-19 → 2026-08-05 A (+17d) | 0% → 100% | 40d → none |
| A46210 | Pipe Laying | 2026-07-20 → 2026-07-04 A (-16d) | 2026-07-28 → 2026-08-05 A (+8d) | 0% → 100% | 40d → none |
| A46220 | Install Manhole | 2026-07-20 → 2026-07-04 A (-16d) | 2026-07-23 → 2026-08-05 A (+13d) | 0% → 100% | 46d → none |
| A46230 | Testing & Inspection | 2026-07-29 → 2026-07-04 A (-25d) | 2026-07-30 → 2026-08-05 A (+6d) | 0% → 100% | 40d → none |
| A46240 | Backfilling & Compaction | 2026-08-01 → 2026-07-04 A (-28d) | 2026-08-04 → 2026-08-05 A (+1d) | 0% → 100% | 40d → none |
| MH-1.12.6 / MH-1.12.7 | **MH-1.12.6 / MH-1.12.7** | 2026-07-20 → 2026-07-04 (-16d) | 2026-08-09 → 2026-08-05 (-4d) |  |  |
| A46250 | Excavation | 2026-07-20 → 2026-07-04 A (-16d) | 2026-07-23 → 2026-08-05 A (+13d) | 0% → 100% | 40d → none |
| A46260 | Pipe Laying | 2026-07-25 → 2026-07-04 A (-21d) | 2026-07-28 → 2026-08-05 A (+8d) | 0% → 100% | 44d → none |
| A46270 | Install Manhole | 2026-07-25 → 2026-07-04 A (-21d) | 2026-07-28 → 2026-08-05 A (+8d) | 0% → 100% | 46d → none |
| A46280 | Testing & Inspection | 2026-07-29 → 2026-07-04 A (-25d) | 2026-07-30 → 2026-08-05 A (+6d) | 0% → 100% | 44d → none |
| A46290 | Backfilling & Compaction | 2026-08-05 → 2026-07-04 A (-32d) | 2026-08-09 → 2026-08-05 A (-4d) | 0% → 100% | 40d → none |
| MH-1.12.6.0 / MH-1.12.6.1 | **MH-1.12.6.0 / MH-1.12.6.1** | 2026-07-25 → 2026-07-04 (-21d) | 2026-08-13 → 2026-08-05 (-8d) |  |  |
| A46300 | Excavation | 2026-07-25 → 2026-07-04 A (-21d) | 2026-07-28 → 2026-08-05 A (+8d) | 0% → 100% | 40d → none |
| A46310 | Pipe Laying | 2026-07-29 → 2026-07-04 A (-25d) | 2026-08-06 → 2026-08-05 A (-1d) | 0% → 100% | 40d → none |
| A46320 | Install Manhole | 2026-07-29 → 2026-07-04 A (-25d) | 2026-08-02 → 2026-08-05 A (+3d) | 0% → 100% | 46d → none |
| A46330 | Testing & Inspection | 2026-08-08 → 2026-07-04 A (-35d) | 2026-08-09 → 2026-08-05 A (-4d) | 0% → 100% | 40d → none |
| A46340 | Backfilling & Compaction | 2026-08-10 → 2026-07-04 A (-37d) | 2026-08-13 → 2026-08-05 A (-8d) | 0% → 100% | 40d → none |
| MH-1.12.7 / MH-1.12.8 | **MH-1.12.7 / MH-1.12.8** | 2026-07-29 → 2026-07-04 (-25d) | 2026-08-18 → 2026-08-05 (-13d) |  |  |
| A46350 | Excavation | 2026-07-29 → 2026-07-04 A (-25d) | 2026-08-02 → 2026-08-05 A (+3d) | 0% → 100% | 40d → none |
| A46360 | Pipe Laying | 2026-08-03 → 2026-07-04 A (-30d) | 2026-08-11 → 2026-08-05 A (-6d) | 0% → 100% | 40d → none |
| A46370 | Install Manhole | 2026-08-03 → 2026-07-04 A (-30d) | 2026-08-06 → 2026-08-05 A (-1d) | 0% → 100% | 46d → none |
| A46380 | Testing & Inspection | 2026-08-12 → 2026-07-04 A (-39d) | 2026-08-13 → 2026-08-05 A (-8d) | 0% → 100% | 40d → none |
| A46390 | Backfilling & Compaction | 2026-08-15 → 2026-07-04 A (-42d) | 2026-08-18 → 2026-08-05 A (-13d) | 0% → 100% | 40d → none |
| MH-1.12.7.0 / MH-1.12.7.1 | **MH-1.12.7.0 / MH-1.12.7.1** | 2026-08-03 → 2026-07-04 (-30d) | 2026-08-23 → 2026-08-05 (-18d) |  |  |
| A46400 | Excavation | 2026-08-03 → 2026-07-04 A (-30d) | 2026-08-06 → 2026-08-05 A (-1d) | 0% → 100% | 40d → none |
| A46410 | Pipe Laying | 2026-08-08 → 2026-07-04 A (-35d) | 2026-08-16 → 2026-08-05 A (-11d) | 0% → 100% | 40d → none |
| A46420 | Install Manhole | 2026-08-08 → 2026-07-04 A (-35d) | 2026-08-11 → 2026-08-05 A (-6d) | 0% → 100% | 46d → none |
| A46430 | Testing & Inspection | 2026-08-17 → 2026-07-04 A (-44d) | 2026-08-18 → 2026-08-05 A (-13d) | 0% → 100% | 40d → none |
| A46440 | Backfilling & Compaction | 2026-08-19 → 2026-07-04 A (-46d) | 2026-08-23 → 2026-08-05 A (-18d) | 0% → 100% | 40d → none |
| MH-1.12.8 / MH-1.12.9 | **MH-1.12.8 / MH-1.12.9** | 2026-08-08 → 2026-07-04 (-35d) | 2026-08-27 → 2026-08-05 (-22d) |  |  |
| A46450 | Excavation | 2026-08-08 → 2026-07-04 A (-35d) | 2026-08-11 → 2026-08-05 A (-6d) | 0% → 100% | 40d → none |
| A46460 | Pipe Laying | 2026-08-12 → 2026-07-04 A (-39d) | 2026-08-20 → 2026-08-05 A (-15d) | 0% → 100% | 40d → none |
| A46470 | Install Manhole | 2026-08-12 → 2026-07-04 A (-39d) | 2026-08-16 → 2026-08-05 A (-11d) | 0% → 100% | 46d → none |
| A46480 | Testing & Inspection | 2026-08-22 → 2026-07-04 A (-49d) | 2026-08-23 → 2026-08-05 A (-18d) | 0% → 100% | 40d → none |
| A46490 | Backfilling & Compaction | 2026-08-24 → 2026-07-04 A (-51d) | 2026-08-27 → 2026-08-05 A (-22d) | 0% → 100% | 40d → none |
| MH-1.12.8.0 / MH-1.12.8.1 | **MH-1.12.8.0 / MH-1.12.8.1** | 2026-08-12 → 2026-07-04 (-39d) | 2026-09-01 → 2026-08-05 (-27d) |  |  |
| A46500 | Excavation | 2026-08-12 → 2026-07-04 A (-39d) | 2026-08-16 → 2026-08-05 A (-11d) | 0% → 100% | 40d → none |
| A46510 | Pipe Laying | 2026-08-17 → 2026-07-04 A (-44d) | 2026-08-25 → 2026-08-05 A (-20d) | 0% → 100% | 40d → none |
| A46520 | Install Manhole | 2026-08-17 → 2026-07-04 A (-44d) | 2026-08-20 → 2026-08-05 A (-15d) | 0% → 100% | 46d → none |
| A46530 | Testing & Inspection | 2026-08-26 → 2026-07-04 A (-53d) | 2026-08-27 → 2026-08-05 A (-22d) | 0% → 100% | 40d → none |
| A46540 | Backfilling & Compaction | 2026-08-29 → 2026-07-04 A (-56d) | 2026-09-01 → 2026-08-05 A (-27d) | 0% → 100% | 40d → none |
| MH-1.12.9 / MH-1.12.10 | **MH-1.12.9 / MH-1.12.10** | 2026-08-17 → 2026-07-04 (-44d) | 2026-09-06 → 2026-08-05 (-32d) |  |  |
| A46550 | Excavation | 2026-08-17 → 2026-07-04 A (-44d) | 2026-08-20 → 2026-08-05 A (-15d) | 0% → 100% | 40d → none |
| A46560 | Pipe Laying | 2026-08-22 → 2026-07-04 A (-49d) | 2026-08-30 → 2026-08-05 A (-25d) | 0% → 100% | 40d → none |
| A46570 | Install Manhole | 2026-08-22 → 2026-07-04 A (-49d) | 2026-08-25 → 2026-08-05 A (-20d) | 0% → 100% | 46d → none |
| A46580 | Testing & Inspection | 2026-08-31 → 2026-07-04 A (-58d) | 2026-09-01 → 2026-08-05 A (-27d) | 0% → 100% | 40d → none |
| A46590 | Backfilling & Compaction | 2026-09-02 → 2026-07-04 A (-60d) | 2026-09-06 → 2026-08-05 A (-32d) | 0% → 100% | 40d → none |
| LR 09 | **LR 09** | 2026-03-31 → 2026-07-04 (+95d) | 2026-06-01 → 2026-08-05 (+65d) |  |  |
| MH-1.12 / MH-1.13 | **MH-1.12 / MH-1.13** | 2026-03-31 → 2026-07-04 (+95d) | 2026-04-20 → 2026-08-05 (+107d) |  |  |
| A46600 | Excavation | 2026-03-31 → 2026-07-04 A (+95d) | 2026-04-04 → 2026-08-05 A (+123d) | 0% → 100% | 139d → none |
| A46610 | Pipe Laying | 2026-04-05 → 2026-07-04 A (+90d) | 2026-04-13 → 2026-08-05 A (+114d) | 0% → 100% | 139d → none |
| A46620 | Install Manhole | 2026-04-05 → 2026-07-04 A (+90d) | 2026-04-08 → 2026-08-05 A (+119d) | 0% → 100% | 145d → none |
| A46630 | Testing & Inspection | 2026-04-14 → 2026-07-04 A (+81d) | 2026-04-15 → 2026-08-05 A (+112d) | 0% → 100% | 139d → none |
| A46640 | Backfilling & Compaction | 2026-04-16 → 2026-07-04 A (+79d) | 2026-04-20 → 2026-08-05 A (+107d) | 0% → 100% | 139d → none |
| MH-1.14 / MH-1.15 | **MH-1.14 / MH-1.15** | 2026-04-05 → 2026-07-04 (+90d) | 2026-04-25 → 2026-08-05 (+102d) |  |  |
| A46650 | Excavation | 2026-04-05 → 2026-07-04 A (+90d) | 2026-04-08 → 2026-08-05 A (+119d) | 0% → 100% | 139d → none |
| A46660 | Pipe Laying | 2026-04-09 → 2026-07-04 A (+86d) | 2026-04-13 → 2026-08-05 A (+114d) | 0% → 100% | 143d → none |
| A46670 | Install Manhole | 2026-04-09 → 2026-07-04 A (+86d) | 2026-04-13 → 2026-08-05 A (+114d) | 0% → 100% | 145d → none |
| A46680 | Testing & Inspection | 2026-04-14 → 2026-07-04 A (+81d) | 2026-04-15 → 2026-08-05 A (+112d) | 0% → 100% | 143d → none |
| A46690 | Backfilling & Compaction | 2026-04-21 → 2026-07-04 A (+74d) | 2026-04-25 → 2026-08-05 A (+102d) | 0% → 100% | 139d → none |
| MH-1.15 / MH-1.16 | **MH-1.15 / MH-1.16** | 2026-04-09 → 2026-07-04 (+86d) | 2026-04-29 → 2026-08-05 (+98d) |  |  |
| A46700 | Excavation | 2026-04-09 → 2026-07-04 A (+86d) | 2026-04-13 → 2026-08-05 A (+114d) | 0% → 100% | 139d → none |
| A46710 | Pipe Laying | 2026-04-14 → 2026-07-04 A (+81d) | 2026-04-22 → 2026-08-05 A (+105d) | 0% → 100% | 139d → none |

| ID | Task | Start | Finish | Complete | Total float |
| --- | --- | --- | --- | --- | --- |
| A46720 | Install Manhole | 2026-04-14 → 2026-07-04 A (+81d) | 2026-04-18 → 2026-08-05 A (+109d) | 0% → 100% | 145d → none |
| A46730 | Testing & Inspection | 2026-04-23 → 2026-07-04 A (+72d) | 2026-04-25 → 2026-08-05 A (+102d) | 0% → 100% | 139d → none |
| A46740 | Backfilling & Compaction | 2026-04-26 → 2026-07-04 A (+69d) | 2026-04-29 → 2026-08-05 A (+98d) | 0% → 100% | 139d → none |
| MH-1.16 / MH-1.17 | **MH-1.16 / MH-1.17** | 2026-04-14 → 2026-07-04 (+81d) | 2026-05-04 → 2026-08-05 (+93d) |  |  |
| A46750 | Excavation | 2026-04-14 → 2026-07-04 A (+81d) | 2026-04-18 → 2026-08-05 A (+109d) | 0% → 100% | 139d → none |
| A46760 | Pipe Laying | 2026-04-19 → 2026-07-04 A (+76d) | 2026-04-27 → 2026-08-05 A (+100d) | 0% → 100% | 139d → none |
| A46770 | Install Manhole | 2026-04-19 → 2026-07-04 A (+76d) | 2026-04-22 → 2026-08-05 A (+105d) | 0% → 100% | 145d → none |
| A46780 | Testing & Inspection | 2026-04-28 → 2026-07-04 A (+67d) | 2026-04-29 → 2026-08-05 A (+98d) | 0% → 100% | 139d → none |
| A46790 | Backfilling & Compaction | 2026-04-30 → 2026-07-04 A (+65d) | 2026-05-04 → 2026-08-05 A (+93d) | 0% → 100% | 139d → none |
| MH-1.17.0 / MH-1.17.1 | **MH-1.17.0 / MH-1.17.1** | 2026-04-19 → 2026-07-04 (+76d) | 2026-05-09 → 2026-08-05 (+88d) |  |  |
| A46800 | Excavation | 2026-04-19 → 2026-07-04 A (+76d) | 2026-04-22 → 2026-08-05 A (+105d) | 0% → 100% | 139d → none |
| A46810 | Pipe Laying | 2026-04-23 → 2026-07-04 A (+72d) | 2026-05-02 → 2026-08-05 A (+95d) | 0% → 100% | 139d → none |
| A46820 | Install Manhole | 2026-04-23 → 2026-07-04 A (+72d) | 2026-04-27 → 2026-08-05 A (+100d) | 0% → 100% | 145d → none |
| A46830 | Testing & Inspection | 2026-05-03 → 2026-07-04 A (+62d) | 2026-05-04 → 2026-08-05 A (+93d) | 0% → 100% | 139d → none |
| A46840 | Backfilling & Compaction | 2026-05-05 → 2026-07-04 A (+60d) | 2026-05-09 → 2026-08-05 A (+88d) | 0% → 100% | 139d → none |
| MH-1.17.1 / MH-1.17.2 | **MH-1.17.1 / MH-1.17.2** | 2026-04-23 → 2026-07-04 (+72d) | 2026-05-13 → 2026-08-05 (+84d) |  |  |
| A46850 | Excavation | 2026-04-23 → 2026-07-04 A (+72d) | 2026-04-27 → 2026-08-05 A (+100d) | 0% → 100% | 139d → none |
| A46860 | Pipe Laying | 2026-04-28 → 2026-07-04 A (+67d) | 2026-05-02 → 2026-08-05 A (+95d) | 0% → 100% | 143d → none |
| A46870 | Install Manhole | 2026-04-28 → 2026-07-04 A (+67d) | 2026-05-02 → 2026-08-05 A (+95d) | 0% → 100% | 145d → none |
| A46880 | Testing & Inspection | 2026-05-03 → 2026-07-04 A (+62d) | 2026-05-04 → 2026-08-05 A (+93d) | 0% → 100% | 143d → none |
| A46890 | Backfilling & Compaction | 2026-05-10 → 2026-07-04 A (+55d) | 2026-05-13 → 2026-08-05 A (+84d) | 0% → 100% | 139d → none |
| MH-1.17.1.0 / MH-1.17.1.1 | **MH-1.17.1.0 / MH-1.17.1.1** | 2026-04-28 → 2026-07-04 (+67d) | 2026-05-18 → 2026-08-05 (+79d) |  |  |
| A46900 | Excavation | 2026-04-28 → 2026-07-04 A (+67d) | 2026-05-02 → 2026-08-05 A (+95d) | 0% → 100% | 139d → none |
| A46910 | Pipe Laying | 2026-05-03 → 2026-07-04 A (+62d) | 2026-05-06 → 2026-08-05 A (+91d) | 0% → 100% | 143d → none |
| A46920 | Install Manhole | 2026-05-03 → 2026-07-04 A (+62d) | 2026-05-06 → 2026-08-05 A (+91d) | 0% → 100% | 145d → none |
| A46930 | Testing & Inspection | 2026-05-07 → 2026-07-04 A (+58d) | 2026-05-09 → 2026-08-05 A (+88d) | 0% → 100% | 143d → none |
| A46940 | Backfilling & Compaction | 2026-05-14 → 2026-07-04 A (+51d) | 2026-05-18 → 2026-08-05 A (+79d) | 0% → 100% | 139d → none |
| MH-1.17.2 / MH-1.17.3 | **MH-1.17.2 / MH-1.17.3** | 2026-05-03 → 2026-07-04 (+62d) | 2026-05-23 → 2026-08-05 (+74d) |  |  |
| A46950 | Excavation | 2026-05-03 → 2026-07-04 A (+62d) | 2026-05-06 → 2026-08-05 A (+91d) | 0% → 100% | 139d → none |
| A46960 | Pipe Laying | 2026-05-07 → 2026-07-04 A (+58d) | 2026-05-16 → 2026-08-05 A (+81d) | 0% → 100% | 139d → none |
| A46970 | Install Manhole | 2026-05-07 → 2026-07-04 A (+58d) | 2026-05-11 → 2026-08-05 A (+86d) | 0% → 100% | 145d → none |
| A46980 | Testing & Inspection | 2026-05-17 → 2026-07-04 A (+48d) | 2026-05-18 → 2026-08-05 A (+79d) | 0% → 100% | 139d → none |
| A46990 | Backfilling & Compaction | 2026-05-19 → 2026-07-04 A (+46d) | 2026-05-23 → 2026-08-05 A (+74d) | 0% → 100% | 139d → none |
| MH-1.17.2.0 / MH-1.17.2.1 | **MH-1.17.2.0 / MH-1.17.2.1** | 2026-05-07 → 2026-07-04 (+58d) | 2026-05-27 → 2026-08-05 (+70d) |  |  |
| A47000 | Excavation | 2026-05-07 → 2026-07-04 A (+58d) | 2026-05-11 → 2026-08-05 A (+86d) | 0% → 100% | 139d → none |
| A47010 | Pipe Laying | 2026-05-12 → 2026-07-04 A (+53d) | 2026-05-20 → 2026-08-05 A (+77d) | 0% → 100% | 139d → none |
| A47020 | Install Manhole | 2026-05-12 → 2026-07-04 A (+53d) | 2026-05-16 → 2026-08-05 A (+81d) | 0% → 100% | 145d → none |
| A47030 | Testing & Inspection | 2026-05-21 → 2026-07-04 A (+44d) | 2026-05-23 → 2026-08-05 A (+74d) | 0% → 100% | 139d → none |
| A47040 | Backfilling & Compaction | 2026-05-24 → 2026-07-04 A (+41d) | 2026-05-27 → 2026-08-05 A (+70d) | 0% → 100% | 139d → none |
| MH-1.17.3 / MH-1.17.4 | **MH-1.17.3 / MH-1.17.4** | 2026-05-12 → 2026-07-04 (+53d) | 2026-06-01 → 2026-08-05 (+65d) |  |  |
| A47050 | Excavation | 2026-05-12 → 2026-07-04 A (+53d) | 2026-05-16 → 2026-08-05 A (+81d) | 0% → 100% | 139d → none |
| A47060 | Pipe Laying | 2026-05-17 → 2026-07-04 A (+48d) | 2026-05-25 → 2026-08-05 A (+72d) | 0% → 100% | 139d → none |
| A47070 | Install Manhole | 2026-05-17 → 2026-07-04 A (+48d) | 2026-05-20 → 2026-08-05 A (+77d) | 0% → 100% | 145d → none |
| A47080 | Testing & Inspection | 2026-05-26 → 2026-07-04 A (+39d) | 2026-05-27 → 2026-08-05 A (+70d) | 0% → 100% | 139d → none |
| A47090 | Backfilling & Compaction | 2026-05-28 → 2026-07-04 A (+37d) | 2026-06-01 → 2026-08-05 A (+65d) | 0% → 100% | 139d → none |
| LR 10 | **LR 10** | 2026-10-18 → 2026-07-04 (-106d) | 2026-11-28 → 2026-08-05 (-115d) |  |  |
| MH-2.23.0 / MH-2.23.1 | **MH-2.23.0 / MH-2.23.1** | 2026-10-18 → 2026-07-04 (-106d) | 2026-10-31 → 2026-08-05 (-87d) |  |  |
| A47100 | Excavation | 2026-10-18 → 2026-07-04 A (-106d) | 2026-10-20 → 2026-08-05 A (-76d) | 0% → 100% | 2d → none |
| A47110 | Pipe Laying | 2026-10-21 → 2026-07-04 A (-109d) | 2026-10-24 → 2026-08-05 A (-80d) | 0% → 100% | 20d → none |
| A47120 | Install Manhole | 2026-10-21 → 2026-07-04 A (-109d) | 2026-10-24 → 2026-08-05 A (-80d) | 0% → 100% | 23d → none |
| A47130 | Testing & Inspection | 2026-10-25 → 2026-07-04 A (-113d) | 2026-10-27 → 2026-08-05 A (-83d) | 0% → 100% | 20d → none |
| A47140 | Backfilling & Compaction | 2026-10-28 → 2026-07-04 A (-116d) | 2026-10-31 → 2026-08-05 A (-87d) | 0% → 100% | 20d → none |
| MH-2.23.1 / MH-2.23.1.1 | **MH-2.23.1 / MH-2.23.1.1** | 2026-10-25 → 2026-07-04 (-113d) | 2026-11-07 → 2026-08-05 (-94d) |  |  |
| A47200 | Excavation | 2026-10-25 → 2026-07-04 A (-113d) | 2026-10-27 → 2026-08-05 A (-83d) | 0% → 100% | 15d → none |
| A47210 | Pipe Laying | 2026-10-28 → 2026-07-04 A (-116d) | 2026-10-31 → 2026-08-05 A (-87d) | 0% → 100% | 20d → none |
| A47220 | Install Manhole | 2026-10-28 → 2026-07-04 A (-116d) | 2026-10-31 → 2026-08-05 A (-87d) | 0% → 100% | 23d → none |
| A47230 | Testing & Inspection | 2026-11-01 → 2026-07-04 A (-120d) | 2026-11-03 → 2026-08-05 A (-90d) | 0% → 100% | 20d → none |
| A47240 | Backfilling & Compaction | 2026-11-04 → 2026-07-04 A (-123d) | 2026-11-07 → 2026-08-05 A (-94d) | 0% → 100% | 20d → none |
| MH-2.23.1 / MH-2.23.2 | **MH-2.23.1 / MH-2.23.2** | 2026-10-21 → 2026-07-04 (-109d) | 2026-11-03 → 2026-08-05 (-90d) |  |  |
| A47150 | Excavation | 2026-10-21 → 2026-07-04 A (-109d) | 2026-10-24 → 2026-08-05 A (-80d) | 0% → 100% | 15d → none |
| A47160 | Pipe Laying | 2026-10-25 → 2026-07-04 A (-113d) | 2026-10-27 → 2026-08-05 A (-83d) | 0% → 100% | 20d → none |
| A47170 | Install Manhole | 2026-10-25 → 2026-07-04 A (-113d) | 2026-10-27 → 2026-08-05 A (-83d) | 0% → 100% | 23d → none |
| A47180 | Testing & Inspection | 2026-10-28 → 2026-07-04 A (-116d) | 2026-10-31 → 2026-08-05 A (-87d) | 0% → 100% | 20d → none |
| A47190 | Backfilling & Compaction | 2026-11-01 → 2026-07-04 A (-120d) | 2026-11-03 → 2026-08-05 A (-90d) | 0% → 100% | 20d → none |
| MH-2.23.1.0 / MH-2.23.1.1 | **MH-2.23.1.0 / MH-2.23.1.1** | 2026-10-28 → 2026-07-04 (-116d) | 2026-11-10 → 2026-08-05 (-97d) |  |  |
| A47250 | Excavation | 2026-10-28 → 2026-07-04 A (-116d) | 2026-10-31 → 2026-08-05 A (-87d) | 0% → 100% | 15d → none |
| A47260 | Pipe Laying | 2026-11-01 → 2026-07-04 A (-120d) | 2026-11-03 → 2026-08-05 A (-90d) | 0% → 100% | 21d → none |
| A47270 | Install Manhole | 2026-11-01 → 2026-07-04 A (-120d) | 2026-11-03 → 2026-08-05 A (-90d) | 0% → 100% | 23d → none |
| A47280 | Testing & Inspection | 2026-11-04 → 2026-07-04 A (-123d) | 2026-11-05 → 2026-08-05 A (-92d) | 0% → 100% | 21d → none |
| A47290 | Backfilling & Compaction | 2026-11-08 → 2026-07-04 A (-127d) | 2026-11-10 → 2026-08-05 A (-97d) | 0% → 100% | 20d → none |

| ID | Task | Start | Finish | Complete | Total float |
| --- | --- | --- | --- | --- | --- |
| MH-2.23.2 / MH-2.23.3 | **MH-2.23.2 / MH-2.23.3** | 2026-11-01 → 2026-07-04 (-120d) | 2026-11-14 → 2026-08-05 (-101d) |  |  |
| A47300 | Excavation | 2026-11-01 → 2026-07-04 A (-120d) | 2026-11-03 → 2026-08-05 A (-90d) | 0% → 100% | 15d → none |
| A47310 | Pipe Laying | 2026-11-04 → 2026-07-04 A (-123d) | 2026-11-07 → 2026-08-05 A (-94d) | 0% → 100% | 20d → none |
| A47320 | Install Manhole | 2026-11-04 → 2026-07-04 A (-123d) | 2026-11-07 → 2026-08-05 A (-94d) | 0% → 100% | 23d → none |
| A47330 | Testing & Inspection | 2026-11-08 → 2026-07-04 A (-127d) | 2026-11-10 → 2026-08-05 A (-97d) | 0% → 100% | 20d → none |
| A47340 | Backfilling & Compaction | 2026-11-11 → 2026-07-04 A (-130d) | 2026-11-14 → 2026-08-05 A (-101d) | 0% → 100% | 20d → none |
| MH-2.23.2.0 / MH-2.23.2.1 | **MH-2.23.2.0 / MH-2.23.2.1** | 2026-11-04 → 2026-07-04 (-123d) | 2026-11-17 → 2026-08-05 (-104d) |  |  |
| A47350 | Excavation | 2026-11-04 → 2026-07-04 A (-123d) | 2026-11-07 → 2026-08-05 A (-94d) | 0% → 100% | 15d → none |
| A47360 | Pipe Laying | 2026-11-08 → 2026-07-04 A (-127d) | 2026-11-10 → 2026-08-05 A (-97d) | 0% → 100% | 20d → none |
| A47370 | Install Manhole | 2026-11-08 → 2026-07-04 A (-127d) | 2026-11-10 → 2026-08-05 A (-97d) | 0% → 100% | 23d → none |
| A47380 | Testing & Inspection | 2026-11-11 → 2026-07-04 A (-130d) | 2026-11-14 → 2026-08-05 A (-101d) | 0% → 100% | 20d → none |
| A47390 | Backfilling & Compaction | 2026-11-15 → 2026-07-04 A (-134d) | 2026-11-17 → 2026-08-05 A (-104d) | 0% → 100% | 20d → none |
| MH-2.23.3 / MH-2.23.4 | **MH-2.23.3 / MH-2.23.4** | 2026-11-08 → 2026-07-04 (-127d) | 2026-11-28 → 2026-08-05 (-115d) |  |  |
| A47400 | Excavation | 2026-11-08 → 2026-07-04 A (-127d) | 2026-11-11 → 2026-08-05 A (-98d) | 0% → 100% | 15d → none |
| A47410 | Pipe Laying | 2026-11-12 → 2026-07-04 A (-131d) | 2026-11-21 → 2026-08-05 A (-108d) | 0% → 100% | 15d → none |
| A47420 | Install Manhole | 2026-11-12 → 2026-07-04 A (-131d) | 2026-11-16 → 2026-08-05 A (-103d) | 0% → 100% | 21d → none |
| A47430 | Testing & Inspection | 2026-11-22 → 2026-07-04 A (-141d) | 2026-11-23 → 2026-08-05 A (-110d) | 0% → 100% | 15d → none |
| A47440 | Backfilling & Compaction | 2026-11-24 → 2026-07-04 A (-143d) | 2026-11-28 → 2026-08-05 A (-115d) | 0% → 100% | 15d → none |
| LR 11 | **LR 11** | 2026-11-12 → 2026-07-04 (-131d) | 2026-12-02 → 2026-08-05 (-119d) |  |  |
| MH-2.21.4.0 / MH-2.21.4.1 | **MH-2.21.4.0 / MH-2.21.4.1** | 2026-11-12 → 2026-07-04 (-131d) | 2026-11-21 → 2026-08-05 (-108d) |  |  |
| A47450 | Excavation | 2026-11-12 → 2026-07-04 A (-131d) | 2026-11-14 → 2026-08-05 A (-101d) | 0% → 100% | 19d → none |
| A47460 | Pipe Laying | 2026-11-15 → 2026-07-04 A (-134d) | 2026-11-16 → 2026-08-05 A (-103d) | 0% → 100% | 19d → none |
| A47470 | Install Manhole | 2026-11-15 → 2026-07-04 A (-134d) | 2026-11-16 → 2026-08-05 A (-103d) | 0% → 100% | 21d → none |
| A47480 | Testing & Inspection | 2026-11-17 → 2026-07-04 A (-136d) | 2026-11-18 → 2026-08-05 A (-105d) | 0% → 100% | 19d → none |
| A47490 | Backfilling & Compaction | 2026-11-19 → 2026-07-04 A (-138d) | 2026-11-21 → 2026-08-05 A (-108d) | 0% → 100% | 19d → none |
| MH-2.21.4.1 / MH-2.21.4.2 | **MH-2.21.4.1 / MH-2.21.4.2** | 2026-11-15 → 2026-07-04 (-134d) | 2026-11-23 → 2026-08-05 (-110d) |  |  |
| A47500 | Excavation | 2026-11-15 → 2026-07-04 A (-134d) | 2026-11-16 → 2026-08-05 A (-103d) | 0% → 100% | 19d → none |
| A47510 | Pipe Laying | 2026-11-17 → 2026-07-04 A (-136d) | 2026-11-18 → 2026-08-05 A (-105d) | 0% → 100% | 19d → none |
| A47520 | Install Manhole | 2026-11-17 → 2026-07-04 A (-136d) | 2026-11-18 → 2026-08-05 A (-105d) | 0% → 100% | 21d → none |
| A47530 | Testing & Inspection | 2026-11-19 → 2026-07-04 A (-138d) | 2026-11-21 → 2026-08-05 A (-108d) | 0% → 100% | 19d → none |
| A47540 | Backfilling & Compaction | 2026-11-22 → 2026-07-04 A (-141d) | 2026-11-23 → 2026-08-05 A (-110d) | 0% → 100% | 19d → none |
| MH-2.21.4.1.0 / MH-2.21.4.1.1 | **MH-2.21.4.1.0 / MH-2.21.4.1.1** | 2026-11-17 → 2026-07-04 (-136d) | 2026-11-25 → 2026-08-05 (-112d) |  |  |
| A47550 | Excavation | 2026-11-17 → 2026-07-04 A (-136d) | 2026-11-18 → 2026-08-05 A (-105d) | 0% → 100% | 19d → none |
| A47560 | Pipe Laying | 2026-11-19 → 2026-07-04 A (-138d) | 2026-11-21 → 2026-08-05 A (-108d) | 0% → 100% | 19d → none |
| A47570 | Install Manhole | 2026-11-19 → 2026-07-04 A (-138d) | 2026-11-21 → 2026-08-05 A (-108d) | 0% → 100% | 21d → none |
| A47580 | Testing & Inspection | 2026-11-22 → 2026-07-04 A (-141d) | 2026-11-23 → 2026-08-05 A (-110d) | 0% → 100% | 19d → none |
| A47590 | Backfilling & Compaction | 2026-11-24 → 2026-07-04 A (-143d) | 2026-11-25 → 2026-08-05 A (-112d) | 0% → 100% | 19d → none |
| MH-2.21.4.2 / MH-2.21.4.3 | **MH-2.21.4.2 / MH-2.21.4.3** | 2026-11-19 → 2026-07-04 (-138d) | 2026-11-28 → 2026-08-05 (-115d) |  |  |
| A47600 | Excavation | 2026-11-19 → 2026-07-04 A (-138d) | 2026-11-21 → 2026-08-05 A (-108d) | 0% → 100% | 19d → none |
| A47610 | Pipe Laying | 2026-11-22 → 2026-07-04 A (-141d) | 2026-11-23 → 2026-08-05 A (-110d) | 0% → 100% | 19d → none |
| A47620 | Install Manhole | 2026-11-22 → 2026-07-04 A (-141d) | 2026-11-23 → 2026-08-05 A (-110d) | 0% → 100% | 21d → none |
| A47630 | Testing & Inspection | 2026-11-24 → 2026-07-04 A (-143d) | 2026-11-25 → 2026-08-05 A (-112d) | 0% → 100% | 19d → none |
| A47640 | Backfilling & Compaction | 2026-11-26 → 2026-07-04 A (-145d) | 2026-11-28 → 2026-08-05 A (-115d) | 0% → 100% | 19d → none |
| MH-2.21.4.2.0 / MH-2.21.4.2.1 | **MH-2.21.4.2.0 / MH-2.21.4.2.1** | 2026-11-22 → 2026-07-04 (-141d) | 2026-11-30 → 2026-08-05 (-117d) |  |  |
| A47650 | Excavation | 2026-11-22 → 2026-07-04 A (-141d) | 2026-11-23 → 2026-08-05 A (-110d) | 0% → 100% | 19d → none |
| A47660 | Pipe Laying | 2026-11-24 → 2026-07-04 A (-143d) | 2026-11-25 → 2026-08-05 A (-112d) | 0% → 100% | 19d → none |
| A47670 | Install Manhole | 2026-11-24 → 2026-07-04 A (-143d) | 2026-11-25 → 2026-08-05 A (-112d) | 0% → 100% | 21d → none |
| A47680 | Testing & Inspection | 2026-11-26 → 2026-07-04 A (-145d) | 2026-11-28 → 2026-08-05 A (-115d) | 0% → 100% | 19d → none |
| A47690 | Backfilling & Compaction | 2026-11-29 → 2026-07-04 A (-148d) | 2026-11-30 → 2026-08-05 A (-117d) | 0% → 100% | 19d → none |
| MH-2.21.4.3 / MH-2.21.4.4 | **MH-2.21.4.3 / MH-2.21.4.4** | 2026-11-24 → 2026-07-04 (-143d) | 2026-12-02 → 2026-08-05 (-119d) |  |  |
| A47700 | Excavation | 2026-11-24 → 2026-07-04 A (-143d) | 2026-11-25 → 2026-08-05 A (-112d) | 0% → 100% | 19d → none |
| A47710 | Pipe Laying | 2026-11-26 → 2026-07-04 A (-145d) | 2026-11-28 → 2026-08-05 A (-115d) | 0% → 100% | 19d → none |
| A47720 | Install Manhole | 2026-11-26 → 2026-07-04 A (-145d) | 2026-11-28 → 2026-08-05 A (-115d) | 0% → 100% | 21d → none |
| A47730 | Testing & Inspection | 2026-11-29 → 2026-07-04 A (-148d) | 2026-11-30 → 2026-08-05 A (-117d) | 0% → 100% | 19d → none |
| A47740 | Backfilling & Compaction | 2026-12-01 → 2026-07-04 A (-150d) | 2026-12-02 → 2026-08-05 A (-119d) | 0% → 100% | 19d → none |
| LR 12 | **LR 12** | 2026-11-01 → 2026-07-04 (-120d) | 2026-12-14 → 2026-08-05 (-131d) |  |  |
| MH-2.21.6.0 / MH-2.21.6.1 | **MH-2.21.6.0 / MH-2.21.6.1** | 2026-11-01 → 2026-07-04 (-120d) | 2026-11-21 → 2026-08-05 (-108d) |  |  |
| A47750 | Excavation | 2026-11-01 → 2026-07-04 A (-120d) | 2026-11-04 → 2026-08-05 A (-91d) | 0% → 100% | 10d → none |
| A47760 | Pipe Laying | 2026-11-05 → 2026-07-04 A (-124d) | 2026-11-14 → 2026-08-05 A (-101d) | 0% → 100% | 10d → none |
| A47770 | Install Manhole | 2026-11-05 → 2026-07-04 A (-124d) | 2026-11-09 → 2026-08-05 A (-96d) | 0% → 100% | 16d → none |
| A47780 | Testing & Inspection | 2026-11-15 → 2026-07-04 A (-134d) | 2026-11-16 → 2026-08-05 A (-103d) | 0% → 100% | 10d → none |
| A47790 | Backfilling & Compaction | 2026-11-17 → 2026-07-04 A (-136d) | 2026-11-21 → 2026-08-05 A (-108d) | 0% → 100% | 10d → none |
| MH-2.21.6.1 / MH-2.21.6.2 | **MH-2.21.6.1 / MH-2.21.6.2** | 2026-11-05 → 2026-07-04 (-124d) | 2026-11-25 → 2026-08-05 (-112d) |  |  |
| A47800 | Excavation | 2026-11-05 → 2026-07-04 A (-124d) | 2026-11-09 → 2026-08-05 A (-96d) | 0% → 100% | 10d → none |
| A47810 | Pipe Laying | 2026-11-10 → 2026-07-04 A (-129d) | 2026-11-18 → 2026-08-05 A (-105d) | 0% → 100% | 10d → none |
| A47820 | Install Manhole | 2026-11-10 → 2026-07-04 A (-129d) | 2026-11-14 → 2026-08-05 A (-101d) | 0% → 100% | 16d → none |
| A47830 | Testing & Inspection | 2026-11-19 → 2026-07-04 A (-138d) | 2026-11-21 → 2026-08-05 A (-108d) | 0% → 100% | 10d → none |
| A47840 | Backfilling & Compaction | 2026-11-22 → 2026-07-04 A (-141d) | 2026-11-25 → 2026-08-05 A (-112d) | 0% → 100% | 10d → none |
| MH-2.21.6.1.0 / MH-2.21.6.1.1 | **MH-2.21.6.1.0 / MH-2.21.6.1.1** | 2026-11-10 → 2026-07-04 (-129d) | 2026-11-30 → 2026-08-05 (-117d) |  |  |
| A47850 | Excavation | 2026-11-10 → 2026-07-04 A (-129d) | 2026-11-14 → 2026-08-05 A (-101d) | 0% → 100% | 10d → none |

| ID | Task | Start | Finish | Complete | Total float |
| --- | --- | --- | --- | --- | --- |
| A47860 | Pipe Laying | 2026-11-15 → 2026-07-04 A (-134d) | 2026-11-18 → 2026-08-05 A (-105d) | 0% → 100% | 14d → none |
| A47870 | Install Manhole | 2026-11-15 → 2026-07-04 A (-134d) | 2026-11-18 → 2026-08-05 A (-105d) | 0% → 100% | 16d → none |
| A47880 | Testing & Inspection | 2026-11-19 → 2026-07-04 A (-138d) | 2026-11-21 → 2026-08-05 A (-108d) | 0% → 100% | 14d → none |
| A47890 | Backfilling & Compaction | 2026-11-26 → 2026-07-04 A (-145d) | 2026-11-30 → 2026-08-05 A (-117d) | 0% → 100% | 10d → none |
| MH-2.21.6.1.1 / MH-2.21.6.1.2 | **MH-2.21.6.1.1 / MH-2.21.6.1.2** | 2026-11-15 → 2026-07-04 (-134d) | 2026-12-05 → 2026-08-05 (-122d) |  |  |
| A47900 | Excavation | 2026-11-15 → 2026-07-04 A (-134d) | 2026-11-18 → 2026-08-05 A (-105d) | 0% → 100% | 10d → none |
| A47910 | Pipe Laying | 2026-11-19 → 2026-07-04 A (-138d) | 2026-11-23 → 2026-08-05 A (-110d) | 0% → 100% | 14d → none |
| A47920 | Install Manhole | 2026-11-19 → 2026-07-04 A (-138d) | 2026-11-23 → 2026-08-05 A (-110d) | 0% → 100% | 16d → none |
| A47930 | Testing & Inspection | 2026-11-24 → 2026-07-04 A (-143d) | 2026-11-25 → 2026-08-05 A (-112d) | 0% → 100% | 14d → none |
| A47940 | Backfilling & Compaction | 2026-12-01 → 2026-07-04 A (-150d) | 2026-12-05 → 2026-08-05 A (-122d) | 0% → 100% | 10d → none |
| MH-2.21.6.2 / MH-2.21.6.3 | **MH-2.21.6.2 / MH-2.21.6.3** | 2026-11-19 → 2026-07-04 (-138d) | 2026-12-09 → 2026-08-05 (-126d) |  |  |
| A47950 | Excavation | 2026-11-19 → 2026-07-04 A (-138d) | 2026-11-23 → 2026-08-05 A (-110d) | 0% → 100% | 10d → none |
| A47960 | Pipe Laying | 2026-11-24 → 2026-07-04 A (-143d) | 2026-12-02 → 2026-08-05 A (-119d) | 0% → 100% | 10d → none |
| A47970 | Install Manhole | 2026-11-24 → 2026-07-04 A (-143d) | 2026-11-28 → 2026-08-05 A (-115d) | 0% → 100% | 16d → none |
| A47980 | Testing & Inspection | 2026-12-03 → 2026-07-04 A (-152d) | 2026-12-05 → 2026-08-05 A (-122d) | 0% → 100% | 10d → none |
| A47990 | Backfilling & Compaction | 2026-12-06 → 2026-07-04 A (-155d) | 2026-12-09 → 2026-08-05 A (-126d) | 0% → 100% | 10d → none |
| MH-2.21.6.3 / MH-2.21.6.4 | **MH-2.21.6.3 / MH-2.21.6.4** | 2026-11-24 → 2026-07-04 (-143d) | 2026-12-14 → 2026-08-05 (-131d) |  |  |
| A48000 | Excavation | 2026-11-24 → 2026-07-04 A (-143d) | 2026-11-28 → 2026-08-05 A (-115d) | 0% → 100% | 10d → none |
| A48010 | Pipe Laying | 2026-11-29 → 2026-07-04 A (-148d) | 2026-12-07 → 2026-08-05 A (-124d) | 0% → 100% | 10d → none |
| A48020 | Install Manhole | 2026-11-29 → 2026-07-04 A (-148d) | 2026-12-02 → 2026-08-05 A (-119d) | 0% → 100% | 16d → none |
| A48030 | Testing & Inspection | 2026-12-08 → 2026-07-04 A (-157d) | 2026-12-09 → 2026-08-05 A (-126d) | 0% → 100% | 10d → none |
| A48040 | Backfilling & Compaction | 2026-12-10 → 2026-07-04 A (-159d) | 2026-12-14 → 2026-08-05 A (-131d) | 0% → 100% | 10d → none |
| LR 13 | **LR 13** | 2026-05-26 → 2026-07-04 (+39d) | 2026-07-08 → 2026-08-05 (+28d) |  |  |
| MH-1.13 / MH-1.14 | **MH-1.13 / MH-1.14** | 2026-05-26 → 2026-07-04 (+39d) | 2026-06-15 → 2026-08-05 (+51d) |  |  |
| A48050 | Excavation | 2026-05-26 → 2026-07-04 A (+39d) | 2026-05-30 → 2026-08-05 A (+67d) | 0% → 100% | 107d → none |
| A48060 | Pipe Laying | 2026-05-31 → 2026-07-04 A (+34d) | 2026-06-08 → 2026-08-05 A (+58d) | 0% → 100% | 107d → none |
| A48070 | Install Manhole | 2026-05-31 → 2026-07-04 A (+34d) | 2026-06-03 → 2026-08-05 A (+63d) | 0% → 100% | 113d → none |
| A48080 | Testing & Inspection | 2026-06-09 → 2026-07-04 A (+25d) | 2026-06-10 → 2026-08-05 A (+56d) | 0% → 100% | 107d → none |
| A48090 | Backfilling & Compaction | 2026-06-11 → 2026-07-04 A (+23d) | 2026-06-15 → 2026-08-05 A (+51d) | 0% → 100% | 107d → none |
| MH-1.15.0 / MH-1.15.1 | **MH-1.15.0 / MH-1.15.1** | 2026-05-31 → 2026-07-04 (+34d) | 2026-06-20 → 2026-08-05 (+46d) |  |  |
| A48100 | Excavation | 2026-05-31 → 2026-07-04 A (+34d) | 2026-06-03 → 2026-08-05 A (+63d) | 0% → 100% | 107d → none |
| A48110 | Pipe Laying | 2026-06-04 → 2026-07-04 A (+30d) | 2026-06-08 → 2026-08-05 A (+58d) | 0% → 100% | 111d → none |
| A48120 | Install Manhole | 2026-06-04 → 2026-07-04 A (+30d) | 2026-06-08 → 2026-08-05 A (+58d) | 0% → 100% | 113d → none |
| A48130 | Testing & Inspection | 2026-06-09 → 2026-07-04 A (+25d) | 2026-06-10 → 2026-08-05 A (+56d) | 0% → 100% | 111d → none |
| A48140 | Backfilling & Compaction | 2026-06-16 → 2026-07-04 A (+18d) | 2026-06-20 → 2026-08-05 A (+46d) | 0% → 100% | 107d → none |
| MH-1.15.1 / MH-1.15.2 | **MH-1.15.1 / MH-1.15.2** | 2026-06-04 → 2026-07-04 (+30d) | 2026-06-24 → 2026-08-05 (+42d) |  |  |
| A48150 | Excavation | 2026-06-04 → 2026-07-04 A (+30d) | 2026-06-08 → 2026-08-05 A (+58d) | 0% → 100% | 107d → none |
| A48160 | Pipe Laying | 2026-06-09 → 2026-07-04 A (+25d) | 2026-06-13 → 2026-08-05 A (+53d) | 0% → 100% | 111d → none |
| A48170 | Install Manhole | 2026-06-09 → 2026-07-04 A (+25d) | 2026-06-13 → 2026-08-05 A (+53d) | 0% → 100% | 113d → none |
| A48180 | Testing & Inspection | 2026-06-14 → 2026-07-04 A (+20d) | 2026-06-15 → 2026-08-05 A (+51d) | 0% → 100% | 111d → none |
| A48190 | Backfilling & Compaction | 2026-06-21 → 2026-07-04 A (+13d) | 2026-06-24 → 2026-08-05 A (+42d) | 0% → 100% | 107d → none |
| MH-1.15.2 / MH-1.15.3 | **MH-1.15.2 / MH-1.15.3** | 2026-06-09 → 2026-07-04 (+25d) | 2026-06-29 → 2026-08-05 (+37d) |  |  |
| A48200 | Excavation | 2026-06-09 → 2026-07-04 A (+25d) | 2026-06-13 → 2026-08-05 A (+53d) | 0% → 100% | 107d → none |
| A48210 | Pipe Laying | 2026-06-14 → 2026-07-04 A (+20d) | 2026-06-22 → 2026-08-05 A (+44d) | 0% → 100% | 107d → none |
| A48220 | Install Manhole | 2026-06-14 → 2026-07-04 A (+20d) | 2026-06-17 → 2026-08-05 A (+49d) | 0% → 100% | 113d → none |
| A48230 | Testing & Inspection | 2026-06-23 → 2026-07-04 A (+11d) | 2026-06-24 → 2026-08-05 A (+42d) | 0% → 100% | 107d → none |
| A48240 | Backfilling & Compaction | 2026-06-25 → 2026-07-04 A (+9d) | 2026-06-29 → 2026-08-05 A (+37d) | 0% → 100% | 107d → none |
| MH-1.15.2.0 / MH-1.15.2.1 | **MH-1.15.2.0 / MH-1.15.2.1** | 2026-06-14 → 2026-07-04 (+20d) | 2026-07-04 → 2026-08-05 (+32d) |  |  |
| A48250 | Excavation | 2026-06-14 → 2026-07-04 A (+20d) | 2026-06-17 → 2026-08-05 A (+49d) | 0% → 100% | 107d → none |
| A48260 | Pipe Laying | 2026-06-18 → 2026-07-04 A (+16d) | 2026-06-27 → 2026-08-05 A (+39d) | 0% → 100% | 107d → none |
| A48270 | Install Manhole | 2026-06-18 → 2026-07-04 A (+16d) | 2026-06-22 → 2026-08-05 A (+44d) | 0% → 100% | 113d → none |
| A48280 | Testing & Inspection | 2026-06-28 → 2026-07-04 A (+6d) | 2026-06-29 → 2026-08-05 A (+37d) | 0% → 100% | 107d → none |
| A48290 | Backfilling & Compaction | 2026-06-30 → 2026-07-04 A (+4d) | 2026-07-04 → 2026-08-05 A (+32d) | 0% → 100% | 107d → none |
| MH-1.15.3 / MH-1.15.4 | **MH-1.15.3 / MH-1.15.4** | 2026-06-18 → 2026-07-04 (+16d) | 2026-07-08 → 2026-08-05 (+28d) |  |  |
| A48300 | Excavation | 2026-06-18 → 2026-07-04 A (+16d) | 2026-06-22 → 2026-08-05 A (+44d) | 0% → 100% | 107d → none |
| A48310 | Pipe Laying | 2026-06-23 → 2026-07-04 A (+11d) | 2026-07-01 → 2026-08-05 A (+35d) | 0% → 100% | 107d → none |
| A48320 | Install Manhole | 2026-06-23 → 2026-07-04 A (+11d) | 2026-06-27 → 2026-08-05 A (+39d) | 0% → 100% | 113d → none |
| A48330 | Testing & Inspection | 2026-07-02 → 2026-07-04 A (+2d) | 2026-07-04 → 2026-08-05 A (+32d) | 0% → 100% | 107d → none |
| A48340 | Backfilling & Compaction | 2026-07-05 → 2026-07-04 A (-1d) | 2026-07-08 → 2026-08-05 A (+28d) | 0% → 100% | 107d → none |
| LR 14 | **LR 14** | 2026-06-14 → 2026-07-04 (+20d) | 2026-07-13 → 2026-08-05 (+23d) |  |  |
| MH-1.17 / MH-1.18 | **MH-1.17 / MH-1.18** | 2026-06-14 → 2026-07-04 (+20d) | 2026-06-29 → 2026-08-05 (+37d) |  |  |
| A48350 | Excavation | 2026-06-14 → 2026-07-04 A (+20d) | 2026-06-17 → 2026-08-05 A (+49d) | 0% → 100% | 103d → none |
| A48360 | Pipe Laying | 2026-06-18 → 2026-07-04 A (+16d) | 2026-06-22 → 2026-08-05 A (+44d) | 0% → 100% | 107d → none |
| A48370 | Install Manhole | 2026-06-18 → 2026-07-04 A (+16d) | 2026-06-22 → 2026-08-05 A (+44d) | 0% → 100% | 109d → none |
| A48380 | Testing & Inspection | 2026-06-23 → 2026-07-04 A (+11d) | 2026-06-24 → 2026-08-05 A (+42d) | 0% → 100% | 107d → none |
| A48390 | Backfilling & Compaction | 2026-06-25 → 2026-07-04 A (+9d) | 2026-06-29 → 2026-08-05 A (+37d) | 0% → 100% | 107d → none |
| MH-1.18 / MH-1.19 | **MH-1.18 / MH-1.19** | 2026-06-18 → 2026-07-04 (+16d) | 2026-07-04 → 2026-08-05 (+32d) |  |  |
| A48400 | Excavation | 2026-06-18 → 2026-07-04 A (+16d) | 2026-06-22 → 2026-08-05 A (+44d) | 0% → 100% | 103d → none |
| A48410 | Pipe Laying | 2026-06-23 → 2026-07-04 A (+11d) | 2026-06-27 → 2026-08-05 A (+39d) | 0% → 100% | 107d → none |
| A48420 | Install Manhole | 2026-06-23 → 2026-07-04 A (+11d) | 2026-06-27 → 2026-08-05 A (+39d) | 0% → 100% | 109d → none |

| ID | Task | Start | Finish | Complete | Total float |
| --- | --- | --- | --- | --- | --- |
| A48430 | Testing & Inspection | 2026-06-28 → 2026-07-04 A (+6d) | 2026-06-29 → 2026-08-05 A (+37d) | 0% → 100% | 107d → none |
| A48440 | Backfilling & Compaction | 2026-06-30 → 2026-07-04 A (+4d) | 2026-07-04 → 2026-08-05 A (+32d) | 0% → 100% | 107d → none |
| MH-1.19.0 / MH-1.19.1 | **MH-1.19.0 / MH-1.19.1** | 2026-06-23 → 2026-07-04 (+11d) | 2026-07-13 → 2026-08-05 (+23d) |  |  |
| A48450 | Excavation | 2026-06-23 → 2026-07-04 A (+11d) | 2026-06-27 → 2026-08-05 A (+39d) | 0% → 100% | 103d → none |
| A48460 | Pipe Laying | 2026-06-28 → 2026-07-04 A (+6d) | 2026-07-06 → 2026-08-05 A (+30d) | 0% → 100% | 103d → none |
| A48470 | Install Manhole | 2026-06-28 → 2026-07-04 A (+6d) | 2026-07-01 → 2026-08-05 A (+35d) | 0% → 100% | 109d → none |
| A48480 | Testing & Inspection | 2026-07-07 → 2026-07-04 A (-3d) | 2026-07-08 → 2026-08-05 A (+28d) | 0% → 100% | 103d → none |
| A48490 | Backfilling & Compaction | 2026-07-09 → 2026-07-04 A (-5d) | 2026-07-13 → 2026-08-05 A (+23d) | 0% → 100% | 103d → none |
| LR 15 | **LR 15** | 2026-10-20 → 2026-07-04 (-108d) | 2026-11-25 → 2026-08-05 (-112d) |  |  |
| MH-1.19 / MH-1.20 | **MH-1.19 / MH-1.20** | 2026-10-20 → 2026-07-04 (-108d) | 2026-11-07 → 2026-08-05 (-94d) |  |  |
| A48500 | Excavation | 2026-10-20 → 2026-07-04 A (-108d) | 2026-10-24 → 2026-08-05 A (-80d) | 0% → 100% | 15d → none |
| A48510 | Pipe Laying | 2026-10-25 → 2026-07-04 A (-113d) | 2026-10-28 → 2026-08-05 A (-84d) | 0% → 100% | 29d → none |
| A48520 | Install Manhole | 2026-10-25 → 2026-07-04 A (-113d) | 2026-10-28 → 2026-08-05 A (-84d) | 0% → 100% | 33d → none |
| A48530 | Testing & Inspection | 2026-10-29 → 2026-07-04 A (-117d) | 2026-11-02 → 2026-08-05 A (-89d) | 0% → 100% | 29d → none |
| A48540 | Backfilling & Compaction | 2026-11-03 → 2026-07-04 A (-122d) | 2026-11-07 → 2026-08-05 A (-94d) | 0% → 100% | 29d → none |
| MH-1.20 / MH-1.20.1 | **MH-1.20 / MH-1.20.1** | 2026-10-25 → 2026-07-04 (-113d) | 2026-11-11 → 2026-08-05 (-98d) |  |  |
| A48550 | Excavation | 2026-10-25 → 2026-07-04 A (-113d) | 2026-10-28 → 2026-08-05 A (-84d) | 0% → 100% | 25d → none |
| A48560 | Pipe Laying | 2026-10-29 → 2026-07-04 A (-117d) | 2026-11-02 → 2026-08-05 A (-89d) | 0% → 100% | 29d → none |
| A48570 | Install Manhole | 2026-10-29 → 2026-07-04 A (-117d) | 2026-11-02 → 2026-08-05 A (-89d) | 0% → 100% | 33d → none |
| A48580 | Testing & Inspection | 2026-11-03 → 2026-07-04 A (-122d) | 2026-11-07 → 2026-08-05 A (-94d) | 0% → 100% | 29d → none |
| A48590 | Backfilling & Compaction | 2026-11-08 → 2026-07-04 A (-127d) | 2026-11-11 → 2026-08-05 A (-98d) | 0% → 100% | 29d → none |
| MH-1.20 / MH-1.21 | **MH-1.20 / MH-1.21** | 2026-10-29 → 2026-07-04 (-117d) | 2026-11-16 → 2026-08-05 (-103d) |  |  |
| A48600 | Excavation | 2026-10-29 → 2026-07-04 A (-117d) | 2026-11-02 → 2026-08-05 A (-89d) | 0% → 100% | 25d → none |
| A48610 | Pipe Laying | 2026-11-03 → 2026-07-04 A (-122d) | 2026-11-07 → 2026-08-05 A (-94d) | 0% → 100% | 29d → none |
| A48620 | Install Manhole | 2026-11-03 → 2026-07-04 A (-122d) | 2026-11-07 → 2026-08-05 A (-94d) | 0% → 100% | 33d → none |
| A48630 | Testing & Inspection | 2026-11-08 → 2026-07-04 A (-127d) | 2026-11-11 → 2026-08-05 A (-98d) | 0% → 100% | 29d → none |
| A48640 | Backfilling & Compaction | 2026-11-12 → 2026-07-04 A (-131d) | 2026-11-16 → 2026-08-05 A (-103d) | 0% → 100% | 29d → none |
| MH-1.21 / MH-1.21.1 | **MH-1.21 / MH-1.21.1** | 2026-11-08 → 2026-07-04 (-127d) | 2026-11-25 → 2026-08-05 (-112d) |  |  |
| A48700 | Excavation | 2026-11-08 → 2026-07-04 A (-127d) | 2026-11-11 → 2026-08-05 A (-98d) | 0% → 100% | 25d → none |
| A48710 | Pipe Laying | 2026-11-12 → 2026-07-04 A (-131d) | 2026-11-16 → 2026-08-05 A (-103d) | 0% → 100% | 29d → none |
| A48720 | Install Manhole | 2026-11-12 → 2026-07-04 A (-131d) | 2026-11-16 → 2026-08-05 A (-103d) | 0% → 100% | 33d → none |
| A48730 | Testing & Inspection | 2026-11-17 → 2026-07-04 A (-136d) | 2026-11-21 → 2026-08-05 A (-108d) | 0% → 100% | 29d → none |
| A48740 | Backfilling & Compaction | 2026-11-22 → 2026-07-04 A (-141d) | 2026-11-25 → 2026-08-05 A (-112d) | 0% → 100% | 29d → none |
| MH-1.21 / MH-1.22 | **MH-1.21 / MH-1.22** | 2026-11-03 → 2026-07-04 (-122d) | 2026-11-21 → 2026-08-05 (-108d) |  |  |
| A48650 | Excavation | 2026-11-03 → 2026-07-04 A (-122d) | 2026-11-07 → 2026-08-05 A (-94d) | 0% → 100% | 25d → none |
| A48660 | Pipe Laying | 2026-11-08 → 2026-07-04 A (-127d) | 2026-11-11 → 2026-08-05 A (-98d) | 0% → 100% | 29d → none |
| A48670 | Install Manhole | 2026-11-08 → 2026-07-04 A (-127d) | 2026-11-11 → 2026-08-05 A (-98d) | 0% → 100% | 33d → none |
| A48680 | Testing & Inspection | 2026-11-12 → 2026-07-04 A (-131d) | 2026-11-16 → 2026-08-05 A (-103d) | 0% → 100% | 29d → none |
| A48690 | Backfilling & Compaction | 2026-11-17 → 2026-07-04 A (-136d) | 2026-11-21 → 2026-08-05 A (-108d) | 0% → 100% | 29d → none |
| LR 16 | **LR 16** | 2026-11-12 → 2026-07-04 (-131d) | 2026-11-30 → 2026-08-05 (-117d) |  |  |
| MH-2.4 / MH-2.5 | **MH-2.4 / MH-2.5** | 2026-11-12 → 2026-07-04 (-131d) | 2026-11-30 → 2026-08-05 (-117d) |  |  |
| A48750 | Excavation | 2026-11-12 → 2026-07-04 A (-131d) | 2026-11-16 → 2026-08-05 A (-103d) | 0% → 100% | 25d → none |
| A48760 | Pipe Laying | 2026-11-17 → 2026-07-04 A (-136d) | 2026-11-21 → 2026-08-05 A (-108d) | 0% → 100% | 25d → none |
| A48770 | Install Manhole | 2026-11-17 → 2026-07-04 A (-136d) | 2026-11-21 → 2026-08-05 A (-108d) | 0% → 100% | 29d → none |
| A48780 | Testing & Inspection | 2026-11-22 → 2026-07-04 A (-141d) | 2026-11-25 → 2026-08-05 A (-112d) | 0% → 100% | 25d → none |
| A48790 | Backfilling & Compaction | 2026-11-26 → 2026-07-04 A (-145d) | 2026-11-30 → 2026-08-05 A (-117d) | 0% → 100% | 25d → none |
| EX LR 01 | **EX LR 01** | 2026-11-17 → 2027-01-02 (+46d) | 2026-12-12 → 2027-01-27 (+46d) |  |  |
| MH-1.8 / MH-1.9 | **MH-1.8 / MH-1.9** | 2026-11-17 → 2027-01-02 (+46d) | 2026-12-07 → 2027-01-23 (+47d) |  |  |
| A48800 | Excavation | 2026-11-17 → 2027-01-02 (+46d) | 2026-11-21 → 2027-01-06 (+46d) |  | 32d → 0.98d |
| A48810 | Pipe Laying | 2026-11-22 → 2027-01-06 (+45d) | 2026-11-30 → 2027-01-16 (+47d) |  | 32d → 0.98d |
| A48820 | Install Manhole | 2026-11-22 → 2027-01-06 (+45d) | 2026-11-25 → 2027-01-11 (+47d) |  | 38d → 6.98d |
| A48830 | Testing & Inspection | 2026-12-01 → 2027-01-16 (+46d) | 2026-12-02 → 2027-01-18 (+47d) |  | 32d → 0.98d |
| A48840 | Backfilling & Compaction | 2026-12-03 → 2027-01-18 (+46d) | 2026-12-07 → 2027-01-23 (+47d) |  | 32d → 0.98d |
| MH-1.9 / MH-1.9 | **MH-1.9 / MH-1.9** | 2026-11-22 → 2027-01-06 (+45d) | 2026-12-12 → 2027-01-27 (+46d) |  |  |
| A48850 | Excavation | 2026-11-22 → 2027-01-06 (+45d) | 2026-11-25 → 2027-01-11 (+47d) |  | 32d → 0.98d |
| A48860 | Pipe Laying | 2026-11-26 → 2027-01-11 (+46d) | 2026-12-05 → 2027-01-20 (+46d) |  | 32d → 0.98d |
| A48870 | Install Manhole | 2026-11-26 → 2027-01-11 (+46d) | 2026-11-30 → 2027-01-16 (+47d) |  | 38d → 6.98d |
| A48880 | Testing & Inspection | 2026-12-06 → 2027-01-20 (+45d) | 2026-12-07 → 2027-01-23 (+47d) |  | 32d → 0.98d |
| A48890 | Backfilling & Compaction | 2026-12-08 → 2027-01-23 (+46d) | 2026-12-12 → 2027-01-27 (+46d) |  | 32d → 0.98d |
| COLLECTOR R- 01 | **COLLECTOR R- 01** | 2026-08-13 → 2026-10-03 (+51d) | 2026-09-07 → 2026-10-27 (+50d) |  |  |
| MH-2.19.0 / MH-2.19.1 | **MH-2.19.0 / MH-2.19.1** | 2026-08-13 → 2026-10-03 (+51d) | 2026-09-02 → 2026-10-22 (+50d) |  |  |
| A48900 | Excavation | 2026-08-13 → 2026-10-03 (+51d) | 2026-08-17 → 2026-10-06 (+50d) |  | 63d → 23d |
| A48910 | Pipe Laying | 2026-08-18 → 2026-10-07 (+50d) | 2026-08-26 → 2026-10-15 (+50d) |  | 63d → 23d |
| A48920 | Install Manhole | 2026-08-18 → 2026-10-07 (+50d) | 2026-08-22 → 2026-10-11 (+50d) |  | 69d → 29d |
| A48930 | Testing & Inspection | 2026-08-27 → 2026-10-17 (+51d) | 2026-08-29 → 2026-10-18 (+50d) |  | 63d → 23d |
| A48940 | Backfilling & Compaction | 2026-08-30 → 2026-10-19 (+50d) | 2026-09-02 → 2026-10-22 (+50d) |  | 63d → 23d |
| MH-2.19.1 / MH-2.19.2 | **MH-2.19.1 / MH-2.19.2** | 2026-08-18 → 2026-10-07 (+50d) | 2026-09-07 → 2026-10-27 (+50d) |  |  |
| A48950 | Excavation | 2026-08-18 → 2026-10-07 (+50d) | 2026-08-22 → 2026-10-11 (+50d) |  | 63d → 23d |
| A48960 | Pipe Laying | 2026-08-23 → 2026-10-12 (+50d) | 2026-08-31 → 2026-10-20 (+50d) |  | 63d → 23d |
| A48970 | Install Manhole | 2026-08-23 → 2026-10-12 (+50d) | 2026-08-26 → 2026-10-15 (+50d) |  | 69d → 29d |

| ID | Task | Start | Finish | Complete | Total float |
| --- | --- | --- | --- | --- | --- |
| A48980 | Testing & Inspection | 2026-09-01 → 2026-10-21 (+50d) | 2026-09-02 → 2026-10-22 (+50d) |  | 63d → 23d |
| A48990 | Backfilling & Compaction | 2026-09-03 → 2026-10-24 (+51d) | 2026-09-07 → 2026-10-27 (+50d) |  | 63d → 23d |
| EX LR 02 | **EX LR 02** | 2026-11-09 → 2027-01-28 (+80d) | 2026-12-24 → 2027-03-16 (+82d) |  |  |
| MH-1.1 / MH-1.2 | **MH-1.1 / MH-1.2** | 2026-11-09 → 2027-01-28 (+80d) | 2026-11-26 → 2027-02-16 (+82d) |  |  |
| A49000 | Excavation | 2026-11-09 → 2027-01-28 (+80d) | 2026-11-12 → 2027-02-02 (+82d) |  | 1d → -40.26d |
| A49010 | Pipe Laying | 2026-11-14 → 2027-02-02 (+80d) | 2026-11-17 → 2027-02-07 (+82d) |  | 21d → -40.02d |
| A49020 | Install Manhole | 2026-11-14 → 2027-02-02 (+80d) | 2026-11-17 → 2027-02-07 (+82d) |  | 25d → -36.02d |
| A49030 | Testing & Inspection | 2026-11-18 → 2027-02-07 (+81d) | 2026-11-22 → 2027-02-11 (+81d) |  | 21d → -40.02d |
| A49040 | Backfilling & Compaction | 2026-11-23 → 2027-02-11 (+80d) | 2026-11-26 → 2027-02-16 (+82d) |  | 21d → -40.02d |
| MH-1.2 / MH-1.3 | **MH-1.2 / MH-1.3** | 2026-11-14 → 2027-02-02 (+80d) | 2026-12-01 → 2027-02-21 (+82d) |  |  |
| A49050 | Excavation | 2026-11-14 → 2027-02-02 (+80d) | 2026-11-17 → 2027-02-07 (+82d) |  | 21d → -40.02d |
| A49060 | Pipe Laying | 2026-11-18 → 2027-02-07 (+81d) | 2026-11-22 → 2027-02-11 (+81d) |  | 21d → -40.02d |
| A49070 | Install Manhole | 2026-11-18 → 2027-02-07 (+81d) | 2026-11-22 → 2027-02-11 (+81d) |  | 25d → -36.02d |
| A49080 | Testing & Inspection | 2026-11-23 → 2027-02-11 (+80d) | 2026-11-26 → 2027-02-16 (+82d) |  | 21d → -40.02d |
| A49090 | Backfilling & Compaction | 2026-11-28 → 2027-02-16 (+80d) | 2026-12-01 → 2027-02-21 (+82d) |  | 21d → -40.02d |
| MH-1.3 / MH-1.4 | **MH-1.3 / MH-1.4** | 2026-11-18 → 2027-02-07 (+81d) | 2026-12-06 → 2027-02-25 (+81d) |  |  |
| A49100 | Excavation | 2026-11-18 → 2027-02-07 (+81d) | 2026-11-22 → 2027-02-11 (+81d) |  | 21d → -40.02d |
| A49110 | Pipe Laying | 2026-11-23 → 2027-02-11 (+80d) | 2026-11-26 → 2027-02-16 (+82d) |  | 21d → -40.02d |
| A49120 | Install Manhole | 2026-11-23 → 2027-02-11 (+80d) | 2026-11-26 → 2027-02-16 (+82d) |  | 25d → -36.02d |
| A49130 | Testing & Inspection | 2026-11-28 → 2027-02-16 (+80d) | 2026-12-01 → 2027-02-21 (+82d) |  | 21d → -40.02d |
| A49140 | Backfilling & Compaction | 2026-12-02 → 2027-02-21 (+81d) | 2026-12-06 → 2027-02-25 (+81d) |  | 21d → -40.02d |
| MH-1.4 / MH-1.5 | **MH-1.4 / MH-1.5** | 2026-11-23 → 2027-02-11 (+80d) | 2026-12-10 → 2027-03-02 (+82d) |  |  |
| A49150 | Excavation | 2026-11-23 → 2027-02-11 (+80d) | 2026-11-26 → 2027-02-16 (+82d) |  | 21d → -40.02d |
| A49160 | Pipe Laying | 2026-11-28 → 2027-02-16 (+80d) | 2026-12-01 → 2027-02-21 (+82d) |  | 21d → -40.02d |
| A49170 | Install Manhole | 2026-11-28 → 2027-02-16 (+80d) | 2026-12-01 → 2027-02-21 (+82d) |  | 25d → -36.02d |
| A49180 | Testing & Inspection | 2026-12-02 → 2027-02-21 (+81d) | 2026-12-06 → 2027-02-25 (+81d) |  | 21d → -40.02d |
| A49190 | Backfilling & Compaction | 2026-12-07 → 2027-02-25 (+80d) | 2026-12-10 → 2027-03-02 (+82d) |  | 21d → -40.02d |
| MH-1.5 / MH-1.6 | **MH-1.5 / MH-1.6** | 2026-11-28 → 2027-02-16 (+80d) | 2026-12-15 → 2027-03-07 (+82d) |  |  |
| A49200 | Excavation | 2026-11-28 → 2027-02-16 (+80d) | 2026-12-01 → 2027-02-21 (+82d) |  | 21d → -40.02d |
| A49210 | Pipe Laying | 2026-12-02 → 2027-02-21 (+81d) | 2026-12-06 → 2027-02-25 (+81d) |  | 21d → -40.02d |
| A49220 | Install Manhole | 2026-12-02 → 2027-02-21 (+81d) | 2026-12-06 → 2027-02-25 (+81d) |  | 25d → -36.02d |
| A49230 | Testing & Inspection | 2026-12-07 → 2027-02-25 (+80d) | 2026-12-10 → 2027-03-02 (+82d) |  | 21d → -40.02d |
| A49240 | Backfilling & Compaction | 2026-12-12 → 2027-03-02 (+80d) | 2026-12-15 → 2027-03-07 (+82d) |  | 21d → -40.02d |
| MH-1.6 / MH-1.7 | **MH-1.6 / MH-1.7** | 2026-12-02 → 2027-02-21 (+81d) | 2026-12-20 → 2027-03-11 (+81d) |  |  |
| A49250 | Excavation | 2026-12-02 → 2027-02-21 (+81d) | 2026-12-06 → 2027-02-25 (+81d) |  | 21d → -40.02d |
| A49260 | Pipe Laying | 2026-12-07 → 2027-02-25 (+80d) | 2026-12-10 → 2027-03-02 (+82d) |  | 21d → -40.02d |
| A49270 | Install Manhole | 2026-12-07 → 2027-02-25 (+80d) | 2026-12-10 → 2027-03-02 (+82d) |  | 25d → -36.02d |
| A49280 | Testing & Inspection | 2026-12-12 → 2027-03-02 (+80d) | 2026-12-15 → 2027-03-07 (+82d) |  | 21d → -40.02d |
| A49290 | Backfilling & Compaction | 2026-12-16 → 2027-03-07 (+81d) | 2026-12-20 → 2027-03-11 (+81d) |  | 21d → -40.02d |
| MH-1.7 / MH-1.8 | **MH-1.7 / MH-1.8** | 2026-12-07 → 2027-02-25 (+80d) | 2026-12-24 → 2027-03-16 (+82d) |  |  |
| A49300 | Excavation | 2026-12-07 → 2027-02-25 (+80d) | 2026-12-10 → 2027-03-02 (+82d) |  | 21d → -40.02d |
| A49310 | Pipe Laying | 2026-12-12 → 2027-03-02 (+80d) | 2026-12-15 → 2027-03-07 (+82d) |  | 21d → -40.02d |
| A49320 | Install Manhole | 2026-12-12 → 2027-03-02 (+80d) | 2026-12-15 → 2027-03-07 (+82d) |  | 25d → -36.02d |
| A49330 | Testing & Inspection | 2026-12-16 → 2027-03-07 (+81d) | 2026-12-20 → 2027-03-11 (+81d) |  | 21d → -40.02d |
| A49340 | Backfilling & Compaction | 2026-12-21 → 2027-03-11 (+80d) | 2026-12-24 → 2027-03-16 (+82d) |  | 21d → -40.02d |
| EX LR 03 | **EX LR 03** | 2026-11-14 → 2026-08-21 (-85d) | 2026-12-29 → 2027-03-16 (+77d) |  |  |
| MH-1.10.2 / MH-1.10.3 | **MH-1.10.2 / MH-1.10.3** | 2026-11-14 → 2026-08-21 (-85d) | 2026-12-01 → 2027-02-16 (+77d) |  |  |
| A49350 | Excavation | 2026-11-14 → 2026-08-21 A (-85d) | 2026-11-17 → 2027-02-02 (+77d) | 0% → 94% | 1d → -40.26d |
| A49360 | Pipe Laying | 2026-11-18 → 2027-02-02 (+76d) | 2026-11-22 → 2027-02-07 (+77d) |  | 17d → -40.26d |
| A49370 | Install Manhole | 2026-11-18 → 2027-02-02 (+76d) | 2026-11-22 → 2027-02-07 (+77d) |  | 21d → -36.26d |
| A49380 | Testing & Inspection | 2026-11-23 → 2027-02-07 (+76d) | 2026-11-26 → 2027-02-11 (+77d) |  | 17d → -40.26d |
| A49390 | Backfilling & Compaction | 2026-11-28 → 2027-02-11 (+75d) | 2026-12-01 → 2027-02-16 (+77d) |  | 17d → -40.26d |
| MH-1.10.3 / MH-1.10.4 | **MH-1.10.3 / MH-1.10.4** | 2026-11-18 → 2026-08-21 (-89d) | 2026-12-06 → 2027-02-21 (+77d) |  |  |
| A49400 | Excavation | 2026-11-18 → 2026-08-21 A (-89d) | 2026-11-22 → 2027-02-02 (+72d) | 0% → 94% | 1d → -36.5d |
| A49410 | Pipe Laying | 2026-11-23 → 2027-02-02 (+71d) | 2026-11-26 → 2027-02-07 (+73d) |  | 17d → -36.5d |
| A49420 | Install Manhole | 2026-11-23 → 2027-02-02 (+71d) | 2026-11-26 → 2027-02-07 (+73d) |  | 21d → -32.5d |
| A49430 | Testing & Inspection | 2026-11-28 → 2027-02-07 (+71d) | 2026-12-01 → 2027-02-11 (+72d) |  | 17d → -36.5d |
| A49440 | Backfilling & Compaction | 2026-12-02 → 2027-02-16 (+76d) | 2026-12-06 → 2027-02-21 (+77d) |  | 17d → -40.26d |
| MH-1.10.4 / MH-1.10.5 | **MH-1.10.4 / MH-1.10.5** | 2026-11-23 → 2026-08-21 (-94d) | 2026-12-10 → 2027-02-25 (+77d) |  |  |
| A49450 | Excavation | 2026-11-23 → 2026-08-21 A (-94d) | 2026-11-26 → 2027-02-02 (+68d) | 0% → 94% | 1d → -33.7d |
| A49460 | Pipe Laying | 2026-11-28 → 2027-02-02 (+66d) | 2026-12-01 → 2027-02-07 (+68d) |  | 17d → -32.74d |
| A49470 | Install Manhole | 2026-11-28 → 2027-02-02 (+66d) | 2026-12-01 → 2027-02-07 (+68d) |  | 21d → -28.74d |
| A49480 | Testing & Inspection | 2026-12-02 → 2027-02-07 (+67d) | 2026-12-06 → 2027-02-11 (+67d) |  | 17d → -32.74d |
| A49490 | Backfilling & Compaction | 2026-12-07 → 2027-02-21 (+76d) | 2026-12-10 → 2027-02-25 (+77d) |  | 17d → -40.26d |
| MH-1.10.5 / MH-1.10.6 | **MH-1.10.5 / MH-1.10.6** | 2026-11-28 → 2026-08-21 (-99d) | 2026-12-15 → 2027-03-02 (+77d) |  |  |
| A49500 | Excavation | 2026-11-28 → 2026-08-21 A (-99d) | 2026-12-01 → 2027-02-02 (+63d) | 0% → 94% | 1d → -33.7d |
| A49510 | Pipe Laying | 2026-12-02 → 2027-02-02 (+62d) | 2026-12-06 → 2027-02-07 (+63d) |  | 17d → -28.98d |
| A49520 | Install Manhole | 2026-12-02 → 2027-02-02 (+62d) | 2026-12-06 → 2027-02-07 (+63d) |  | 21d → -24.98d |
| A49530 | Testing & Inspection | 2026-12-07 → 2027-02-07 (+62d) | 2026-12-10 → 2027-02-11 (+63d) |  | 17d → -28.98d |
| A49540 | Backfilling & Compaction | 2026-12-12 → 2027-02-25 (+75d) | 2026-12-15 → 2027-03-02 (+77d) |  | 17d → -40.26d |

| ID | Task | Start | Finish | Complete | Total float | Predecessors |
| --- | --- | --- | --- | --- | --- | --- |
| MH-1.10.6 / MH-1.10.7 | **MH-1.10.6 / MH-1.10.7** | 2026-12-02 → 2026-08-21 (-103d) | 2026-12-20 → 2027-03-07 (+77d) |  |  |  |
| A49550 | Excavation | 2026-12-02 → 2026-08-21 A (-103d) | 2026-12-06 → 2027-02-03 (+59d) | 0% → 94% | 1d → -33.7d |  |
| A49560 | Pipe Laying | 2026-12-07 → 2027-02-03 (+58d) | 2026-12-10 → 2027-02-08 (+60d) |  | 17d → -25.22d |  |
| A49570 | Install Manhole | 2026-12-07 → 2027-02-03 (+58d) | 2026-12-10 → 2027-02-08 (+60d) |  | 21d → -21.22d |  |
| A49580 | Testing & Inspection | 2026-12-12 → 2027-02-08 (+58d) | 2026-12-15 → 2027-02-13 (+60d) |  | 17d → -25.22d |  |
| A49590 | Backfilling & Compaction | 2026-12-16 → 2027-03-02 (+76d) | 2026-12-20 → 2027-03-07 (+77d) |  | 17d → -40.26d |  |
| MH-1.10.7 / MH-1.10.8 | **MH-1.10.7 / MH-1.10.8** | 2026-12-07 → 2026-08-21 (-108d) | 2026-12-24 → 2027-03-11 (+77d) |  |  |  |
| A49600 | Excavation | 2026-12-07 → 2026-08-21 A (-108d) | 2026-12-10 → 2027-02-03 (+55d) | 0% → 94% | 1d → -33.7d |  |
| A49610 | Pipe Laying | 2026-12-12 → 2027-02-03 (+53d) | 2026-12-15 → 2027-02-08 (+55d) |  | 17d → -21.46d |  |
| A49620 | Install Manhole | 2026-12-12 → 2027-02-03 (+53d) | 2026-12-15 → 2027-02-08 (+55d) |  | 21d → -17.46d |  |
| A49630 | Testing & Inspection | 2026-12-16 → 2027-02-08 (+54d) | 2026-12-20 → 2027-02-13 (+55d) |  | 17d → -21.46d |  |
| A49640 | Backfilling & Compaction | 2026-12-21 → 2027-03-07 (+76d) | 2026-12-24 → 2027-03-11 (+77d) |  | 17d → -40.26d |  |
| MH-1.10.8 / MH-1.10.9 | **MH-1.10.8 / MH-1.10.9** | 2026-12-12 → 2026-08-21 (-113d) | 2026-12-29 → 2027-03-16 (+77d) |  |  |  |
| A49650 | Excavation | 2026-12-12 → 2026-08-21 A (-113d) | 2026-12-15 → 2027-02-03 (+50d) | 0% → 94% | 1d → -33.7d |  |
| A49660 | Pipe Laying | 2026-12-16 → 2027-02-03 (+49d) | 2026-12-20 → 2027-02-08 (+50d) |  | 17d → -17.7d |  |
| A49670 | Install Manhole | 2026-12-16 → 2027-02-03 (+49d) | 2026-12-20 → 2027-02-08 (+50d) |  | 21d → -13.7d |  |
| A49680 | Testing & Inspection | 2026-12-21 → 2027-02-08 (+49d) | 2026-12-24 → 2027-02-13 (+51d) |  | 17d → -17.7d |  |
| A49690 | Backfilling & Compaction | 2026-12-26 → 2027-03-11 (+75d) | 2026-12-29 → 2027-03-16 (+77d) |  | 17d → -40.26d |  |
| EX LR 016 | **EX LR 016** | 2026-12-16 → 2026-07-04 (-165d) | 2027-01-17 → 2027-03-08 (+50d) |  |  |  |
| MH-2.0 / MH-2.1 | **MH-2.0 / MH-2.1** | 2026-12-16 → 2027-02-03 (+49d) | 2027-01-03 → 2027-02-22 (+50d) |  |  |  |
| A49700 | Excavation | 2026-12-16 → 2027-02-03 (+49d) | 2026-12-20 → 2027-02-08 (+50d) |  | 1d → -33.7d |  |
| A49710 | Pipe Laying | 2026-12-21 → 2027-02-08 (+49d) | 2026-12-24 → 2027-02-13 (+51d) |  | 1d → -33.7d |  |
| A49720 | Install Manhole | 2026-12-21 → 2027-02-08 (+49d) | 2026-12-24 → 2027-02-13 (+51d) |  | 5d → -29.7d |  |
| A49730 | Testing & Inspection | 2026-12-26 → 2027-02-13 (+49d) | 2026-12-29 → 2027-02-17 (+50d) |  | 1d → -33.7d |  |
| A49740 | Backfilling & Compaction | 2026-12-30 → 2027-02-17 (+49d) | 2027-01-03 → 2027-02-22 (+50d) |  | 1d → -33.7d |  |
| MH-2.1 / MH-2.2 | **MH-2.1 / MH-2.2** | 2026-12-21 → 2027-02-08 (+49d) | 2027-01-07 → 2027-02-27 (+51d) |  |  |  |
| A49750 | Excavation | 2026-12-21 → 2027-02-08 (+49d) | 2026-12-24 → 2027-02-13 (+51d) |  | 1d → -33.7d |  |
| A49760 | Pipe Laying | 2026-12-26 → 2027-02-13 (+49d) | 2026-12-29 → 2027-02-17 (+50d) |  | 1d → -33.7d |  |
| A49770 | Install Manhole | 2026-12-26 → 2027-02-13 (+49d) | 2026-12-29 → 2027-02-17 (+50d) |  | 5d → -29.7d |  |
| A49780 | Testing & Inspection | 2026-12-30 → 2027-02-17 (+49d) | 2027-01-03 → 2027-02-22 (+50d) |  | 1d → -33.7d |  |
| A49790 | Backfilling & Compaction | 2027-01-04 → 2027-02-22 (+49d) | 2027-01-07 → 2027-02-27 (+51d) |  | 1d → -33.7d |  |
| MH-2.2 / MH-2.3 | **MH-2.2 / MH-2.3** | 2026-12-26 → 2027-02-13 (+49d) | 2027-01-12 → 2027-03-03 (+50d) |  |  |  |
| A49800 | Excavation | 2026-12-26 → 2027-02-13 (+49d) | 2026-12-29 → 2027-02-17 (+50d) |  | 1d → -33.7d |  |
| A49810 | Pipe Laying | 2026-12-30 → 2027-02-17 (+49d) | 2027-01-03 → 2027-02-22 (+50d) |  | 1d → -33.7d |  |
| A49820 | Install Manhole | 2026-12-30 → 2027-02-17 (+49d) | 2027-01-03 → 2027-02-22 (+50d) |  | 5d → -29.7d |  |
| A49830 | Testing & Inspection | 2027-01-04 → 2027-02-22 (+49d) | 2027-01-07 → 2027-02-27 (+51d) |  | 1d → -33.7d |  |
| A49840 | Backfilling & Compaction | 2027-01-09 → 2027-02-27 (+49d) | 2027-01-12 → 2027-03-03 (+50d) |  | 1d → -33.7d |  |
| MH-2.3 / MH-2.4 | **MH-2.3 / MH-2.4** | 2026-12-30 → 2026-07-04 (-179d) | 2027-01-17 → 2027-03-08 (+50d) |  |  |  |
| A49850 | Excavation | 2026-12-30 → 2026-07-04 A (-179d) | 2027-01-03 → 2026-08-05 A (-151d) | 0% → 100% | 1d → none |  |
| A49860 | Pipe Laying | 2027-01-04 → 2026-07-04 A (-184d) | 2027-01-07 → 2026-08-05 A (-155d) | 0% → 100% | 1d → none |  |
| A49870 | Install Manhole | 2027-01-04 → 2026-07-04 A (-184d) | 2027-01-07 → 2026-08-05 A (-155d) | 0% → 100% | 5d → none |  |
| A49880 | Testing & Inspection | 2027-01-09 → 2027-02-17 (+39d) | 2027-01-12 → 2027-02-22 (+41d) |  | 1d → -25.7d |  |
| A49890 | Backfilling & Compaction | 2027-01-13 → 2027-03-03 (+49d) | 2027-01-17 → 2027-03-08 (+50d) |  | 1d → -33.7d |  |
| PW | **POTABLE NETWORK** | 2026-08-18 → 2026-08-20 (+2d) | 2027-01-24 → 2027-05-08 (+104d) |  |  |  |
| R1 | **Road 1** | 2026-10-21 → 2026-08-20 (-62d) | 2027-01-21 → 2027-02-21 (+31d) |  |  |  |
| A86670 | Road Crossing Works | 2026-10-21 → 2026-08-20 A (-62d) | 2026-11-03 → 2026-09-28 A (-36d) | 0% → 100% | 24d → none |  |
| A86610 | Trenching & Bedding | 2026-10-27 → 2026-09-15 A (-42d) | 2026-11-07 → 2027-01-04 (+58d) | 0% → 95% | 21d → -19.5d | A86670 SS, A1340, A1350, A1360, A1370, A1380, A11010, A11000, A10990, A11100, A11050, A11060, A86670 FF → A86670 SS, A1340, A1350, A1360, A1370, A1380, A11020, A11010, A11000, A10990, A11100, A11170, A11180, A11030, A11050, A11060, A86670 FF |
| A86620 | Pipe Laying | 2026-10-31 → 2026-09-15 A (-46d) | 2026-11-18 → 2027-01-07 (+50d) | 0% → 95% | 21d → -19.5d |  |
| A86630 | Backfilling & Compaction | 2026-11-24 → 2026-09-15 A (-70d) | 2026-12-02 → 2027-01-12 (+41d) | 0% → 95% | 47d → 14.1d |  |
| A86640 | Testing | 2026-11-19 → 2027-01-07 (+49d) | 2026-11-23 → 2027-01-12 (+50d) |  | 21d → -19.5d |  |
| A86650 | Chambers Construction works | 2026-11-24 → 2027-01-12 (+49d) | 2026-12-12 → 2027-01-31 (+50d) |  | 21d → -19.5d | A86640, A11030 → A86640 |
| A86660 | Valves & Fittings Installation | 2027-01-02 → 2027-01-31 (+29d) | 2027-01-21 → 2027-02-21 (+31d) |  | 4d → -19.5d | A86650, A11180, A11170, A11020 → A86650 |
| R11 | **Road 2** | 2026-10-21 → 2026-08-20 (-62d) | 2027-01-21 → 2027-02-24 (+34d) |  |  |  |
| A86690 | Road Crossing Works | 2026-10-21 → 2026-08-20 A (-62d) | 2026-11-08 → 2026-09-28 A (-41d) | 0% → 100% | 18d → none |  |
| A86680 | Trenching & Bedding | 2026-10-24 → 2026-09-15 A (-39d) | 2026-11-08 → 2027-01-02 (+55d) | 0% → 95% | 18d → -22.72d |  |
| A86700 | Pipe Laying | 2026-11-02 → 2026-09-15 A (-48d) | 2026-11-22 → 2027-01-11 (+50d) | 0% → 95% | 18d → -22.72d |  |
| A86720 | Backfilling & Compaction | 2026-11-28 → 2026-09-15 A (-74d) | 2026-12-15 → 2027-01-17 (+33d) | 0% → 95% | 36d → 10.48d |  |
| A86710 | Testing | 2026-11-23 → 2027-01-11 (+49d) | 2026-11-26 → 2027-01-16 (+51d) |  | 18d → -22.72d |  |
| A86730 | Chambers Construction works | 2026-11-28 → 2027-01-16 (+49d) | 2026-12-15 → 2027-02-03 (+50d) |  | 18d → -22.72d |  |
| A86740 | Valves & Fittings Installation | 2027-01-02 → 2027-02-03 (+32d) | 2027-01-21 → 2027-02-24 (+34d) |  | 4d → -22.72d | A86730, A11180, A11020 → A86730 |
| R12 | **Road 3** | 2026-11-25 → 2026-08-20 (-97d) | 2027-01-20 → 2027-02-15 (+26d) |  |  |  |
| A86750 | Trenching & Bedding | 2026-11-30 → 2026-08-20 A (-102d) | 2026-12-10 → 2026-09-28 A (-73d) | 0% → 100% | 5d → none |  |
| A86760 | Road Crossing Works | 2026-11-25 → 2026-08-20 A (-97d) | 2026-12-10 → 2026-09-28 A (-73d) | 0% → 100% | 5d → none |  |
| A86770 | Pipe Laying | 2026-12-09 → 2026-09-29 A (-71d) | 2026-12-24 → 2027-01-19 (+26d) | 0% → 50% | 5d → -14.02d |  |
| A86780 | Testing | 2026-12-26 → 2027-01-19 (+24d) | 2026-12-29 → 2027-01-24 (+26d) |  | 5d → -14.02d |  |
| A86790 | Backfilling & Compaction | 2026-12-30 → 2027-01-24 (+25d) | 2027-01-06 → 2027-02-01 (+26d) |  | 17d → -2.02d |  |
| A86800 | Chambers Construction works | 2026-12-30 → 2027-01-24 (+25d) | 2027-01-07 → 2027-02-02 (+26d) |  | 5d → -14.02d |  |
| A86810 | Valves & Fittings Installation | 2027-01-09 → 2027-02-02 (+24d) | 2027-01-20 → 2027-02-15 (+26d) |  | 5d → -14.02d | A86800, A11180, A11020 → A86800 |
| R13 | **Road 4** | 2026-10-17 → 2026-08-20 (-58d) | 2027-01-21 → 2027-03-06 (+44d) |  |  |  |
| A86830 | Road Crossing Works | 2026-10-17 → 2026-08-20 A (-58d) | 2026-11-03 → 2026-09-28 A (-36d) | 0% → 100% | 22d → none |  |

| ID | Task | Start | Finish | Complete | Total float | Predecessors |
| --- | --- | --- | --- | --- | --- | --- |
| A86820 | Trenching & Bedding | 2026-10-19 → 2026-12-21 (+63d) | 2026-11-03 → 2027-01-06 (+64d) |  | 22d → -30.02d |  |
| A86840 | Pipe Laying | 2026-10-28 → 2026-12-30 (+63d) | 2026-11-17 → 2027-01-20 (+64d) |  | 22d → -30.02d |  |
| A86850 | Testing | 2026-11-18 → 2027-01-20 (+63d) | 2026-11-22 → 2027-01-25 (+64d) |  | 22d → -30.02d |  |
| A86860 | Backfilling & Compaction | 2026-11-23 → 2027-01-25 (+63d) | 2026-12-10 → 2027-02-13 (+65d) |  | 40d → -12.02d |  |
| A86870 | Chambers Construction works | 2026-11-23 → 2027-01-25 (+63d) | 2026-12-10 → 2027-02-13 (+65d) |  | 22d → -30.02d |  |
| A86880 | Valves & Fittings Installation | 2027-01-02 → 2027-02-13 (+42d) | 2027-01-21 → 2027-03-06 (+44d) |  | 4d → -30.02d | A86870, A11180, A11020 → A86870 |
| R14 | **Road 5** | 2026-10-21 → 2026-08-20 (-62d) | 2027-01-21 → 2027-05-08 (+107d) |  |  |  |
| A86900 | Road Crossing Works | 2026-10-21 → 2026-08-20 A (-62d) | 2026-11-08 → 2026-09-28 A (-41d) | 0% → 100% | 18d → none |  |
| A86890 | Trenching & Bedding | 2026-10-24 → 2027-02-22 (+121d) | 2026-11-08 → 2027-03-10 (+122d) |  | 18d → -84.1d |  |
| A86910 | Pipe Laying | 2026-11-02 → 2027-03-03 (+121d) | 2026-11-22 → 2027-03-24 (+122d) |  | 18d → -84.1d |  |
| A86920 | Testing | 2026-11-23 → 2027-03-24 (+121d) | 2026-11-26 → 2027-03-29 (+123d) |  | 18d → -84.1d |  |
| A86930 | Backfilling & Compaction | 2026-11-28 → 2027-03-29 (+121d) | 2026-12-15 → 2027-04-17 (+123d) |  | 36d → -66.1d |  |
| A86940 | Chambers Construction works | 2026-11-28 → 2027-03-29 (+121d) | 2026-12-15 → 2027-04-17 (+123d) |  | 18d → -84.1d |  |
| A86950 | Valves & Fittings Installation | 2027-01-02 → 2027-04-17 (+105d) | 2027-01-21 → 2027-05-08 (+107d) |  | 4d → -84.1d | A86940, A11180, A11020 → A86940 |
| R15 | **Road 6** | 2026-08-18 → 2026-08-20 (+2d) | 2027-01-21 → 2027-02-22 (+32d) |  |  |  |
| A86970 | Road Crossing Works | 2026-08-18 → 2026-08-20 A (+2d) | 2026-09-05 → 2026-09-28 A (+23d) | 0% → 100% | 2d → none |  |
| A86960 | Trenching & Bedding | 2026-08-20 → 2026-12-09 (+111d) | 2026-09-05 → 2026-12-26 (+112d) |  | 2d → -93.3d |  |
| A86980 | Pipe Laying | 2026-08-30 → 2026-12-19 (+111d) | 2026-09-19 → 2027-01-09 (+112d) |  | 2d → -93.3d |  |
| A86990 | Testing | 2026-09-20 → 2027-01-09 (+111d) | 2026-09-23 → 2027-01-13 (+112d) |  | 2d → -93.3d |  |
| A87000 | Backfilling & Compaction | 2026-09-24 → 2027-01-13 (+111d) | 2026-10-12 → 2027-02-01 (+112d) |  | 91d → -2.3d |  |
| A87010 | Chambers Construction works | 2026-09-24 → 2027-01-13 (+111d) | 2026-10-12 → 2027-02-01 (+112d) |  | 2d → -93.3d |  |
| A87020 | Valves & Fittings Installation | 2027-01-02 → 2027-02-01 (+30d) | 2027-01-21 → 2027-02-22 (+32d) |  | 4d → -20.3d | A87010, A11180, A11020 → A87010 |
| R16 | **Road 7** | 2026-10-21 → 2026-08-20 (-62d) | 2027-01-21 → 2027-03-17 (+55d) |  |  |  |
| A87040 | Road Crossing Works | 2026-10-21 → 2026-08-20 A (-62d) | 2026-11-08 → 2026-09-28 A (-41d) | 0% → 100% | 15d → none |  |
| A87030 | Trenching & Bedding | 2026-10-24 → 2027-01-02 (+70d) | 2026-11-08 → 2027-01-18 (+71d) |  | 15d → -45.02d |  |
| A87050 | Pipe Laying | 2026-11-02 → 2027-01-11 (+70d) | 2026-11-22 → 2027-02-01 (+71d) |  | 18d → -40.02d |  |
| A87060 | Testing | 2026-11-23 → 2027-02-01 (+70d) | 2026-11-26 → 2027-02-06 (+72d) |  | 18d → -40.02d |  |
| A87070 | Backfilling & Compaction | 2026-11-28 → 2027-02-06 (+70d) | 2026-12-15 → 2027-02-24 (+71d) |  | 36d → -22.02d |  |
| A87080 | Chambers Construction works | 2026-11-28 → 2027-02-06 (+70d) | 2026-12-15 → 2027-02-24 (+71d) |  | 18d → -40.02d |  |
| A87090 | Valves & Fittings Installation | 2027-01-02 → 2027-02-24 (+53d) | 2027-01-21 → 2027-03-17 (+55d) |  | 4d → -40.02d | A87080, A11180, A11020 → A87080 |
| R17 | **Road 8** | 2026-10-21 → 2026-08-20 (-62d) | 2027-01-21 → 2027-03-17 (+55d) |  |  |  |
| A87110 | Road Crossing Works | 2026-10-21 → 2026-08-20 A (-62d) | 2026-11-08 → 2026-09-28 A (-41d) | 0% → 100% | 2d → none |  |
| A87100 | Trenching & Bedding | 2026-10-24 → 2027-01-02 (+70d) | 2026-11-08 → 2027-01-18 (+71d) |  | 18d → -40.02d |  |
| A87120 | Pipe Laying | 2026-11-02 → 2027-01-11 (+70d) | 2026-11-22 → 2027-02-01 (+71d) |  | 18d → -40.02d |  |
| A87130 | Testing | 2026-11-23 → 2027-02-01 (+70d) | 2026-11-26 → 2027-02-06 (+72d) |  | 18d → -40.02d |  |
| A87140 | Backfilling & Compaction | 2026-11-28 → 2027-02-06 (+70d) | 2026-12-15 → 2027-02-24 (+71d) |  | 36d → -22.02d |  |
| A87150 | Chambers Construction works | 2026-11-28 → 2027-02-06 (+70d) | 2026-12-15 → 2027-02-24 (+71d) |  | 18d → -40.02d |  |
| A87160 | Valves & Fittings Installation | 2027-01-02 → 2027-02-24 (+53d) | 2027-01-21 → 2027-03-17 (+55d) |  | 4d → -40.02d | A87150, A11180, A11020 → A87150 |
| R18 | **Road 9** | 2026-11-09 → 2026-08-20 (-81d) | 2027-01-24 → 2027-03-17 (+52d) |  |  |  |
| A87180 | Road Crossing Works | 2026-11-09 → 2026-08-20 A (-81d) | 2026-11-26 → 2026-09-28 A (-59d) | 0% → 100% | 2d → none |  |
| A87170 | Trenching & Bedding | 2026-11-11 → 2027-01-02 (+52d) | 2026-11-26 → 2027-01-18 (+53d) |  | 2d → -40.02d |  |
| A87190 | Pipe Laying | 2026-11-21 → 2027-01-11 (+51d) | 2026-12-10 → 2027-02-01 (+53d) |  | 2d → -40.02d |  |
| A87200 | Testing | 2026-12-12 → 2027-02-01 (+51d) | 2026-12-15 → 2027-02-06 (+53d) |  | 2d → -40.02d |  |
| A87210 | Backfilling & Compaction | 2026-12-16 → 2027-02-06 (+52d) | 2027-01-03 → 2027-02-24 (+52d) |  | 20d → -22.02d |  |
| A87220 | Chambers Construction works | 2026-12-16 → 2027-02-06 (+52d) | 2027-01-03 → 2027-02-24 (+52d) |  | 2d → -40.02d |  |
| A87230 | Valves & Fittings Installation | 2027-01-04 → 2027-02-24 (+51d) | 2027-01-24 → 2027-03-17 (+52d) |  | 2d → -40.02d | A87220, A11180, A11020 → A87220 |
| R19 | **Road 10** | 2026-11-29 → 2026-08-20 (-101d) | 2027-01-09 → 2027-02-13 (+35d) |  |  |  |
| A87250 | Road Crossing Works | 2026-11-29 → 2026-08-20 A (-101d) | 2026-12-09 → 2026-09-28 A (-72d) | 0% → 100% | 15d → none |  |
| A87240 | Trenching & Bedding | 2026-11-29 → 2027-01-02 (+34d) | 2026-12-09 → 2027-01-13 (+35d) |  | 15d → -12.02d |  |
| A87260 | Pipe Laying | 2026-12-08 → 2027-01-11 (+34d) | 2026-12-19 → 2027-01-23 (+35d) |  | 15d → -12.02d |  |
| A87270 | Testing | 2026-12-20 → 2027-01-23 (+34d) | 2026-12-23 → 2027-01-27 (+35d) |  | 15d → -12.02d |  |
| A87280 | Backfilling & Compaction | 2026-12-24 → 2027-01-27 (+34d) | 2026-12-31 → 2027-02-04 (+35d) |  | 22d → -5.02d |  |
| A87290 | Chambers Construction works | 2026-12-24 → 2027-01-27 (+34d) | 2026-12-31 → 2027-02-04 (+35d) |  | 15d → -12.02d |  |
| A87300 | Valves & Fittings Installation | 2027-01-02 → 2027-02-04 (+33d) | 2027-01-09 → 2027-02-13 (+35d) |  | 15d → -12.02d | A87290, A11180, A11020 → A87290 |
| R110 | **Road 11** | 2026-12-03 → 2026-08-20 (-105d) | 2027-01-06 → 2027-01-28 (+22d) |  |  |  |
| A87320 | Road Crossing Works | 2026-12-03 → 2026-08-20 A (-105d) | 2026-12-08 → 2026-09-28 A (-71d) | 0% → 100% | 19d → none |  |
| A87310 | Trenching & Bedding | 2026-12-03 → 2026-09-15 A (-79d) | 2026-12-08 → 2027-01-02 (+25d) | 0% → 90% | 19d → 0.48d |  |
| A87330 | Pipe Laying | 2026-12-13 → 2026-09-15 A (-89d) | 2026-12-17 → 2027-01-11 (+25d) | 0% → 90% | 19d → 0.48d |  |
| A87350 | Backfilling & Compaction | 2026-12-24 → 2026-09-15 A (-100d) | 2026-12-29 → 2027-01-18 (+20d) | 0% → 90% | 24d → 9.98d |  |
| A87340 | Testing | 2026-12-19 → 2027-01-11 (+23d) | 2026-12-23 → 2027-01-17 (+25d) |  | 19d → 0.48d |  |
| A87360 | Chambers Construction works | 2026-12-24 → 2027-01-17 (+24d) | 2026-12-29 → 2027-01-23 (+25d) |  | 19d → 0.48d |  |
| A87370 | Valves & Fittings Installation | 2027-01-02 → 2027-01-23 (+21d) | 2027-01-06 → 2027-01-28 (+22d) |  | 17d → 0.48d | A87360, A11180, A11020 → A87360 |
| R111 | **Road 12** | 2026-12-15 → 2026-08-20 (-117d) | 2027-01-14 → 2027-02-02 (+19d) |  |  |  |
| A87390 | Road Crossing Works | 2026-12-15 → 2026-08-20 A (-117d) | 2026-12-17 → 2026-09-28 A (-80d) | 0% → 100% | 10d → none |  |
| A87380 | Trenching & Bedding | 2026-12-15 → 2027-01-02 (+18d) | 2026-12-17 → 2027-01-05 (+19d) |  | 10d → -3.02d |  |
| A87400 | Pipe Laying | 2026-12-24 → 2027-01-11 (+18d) | 2026-12-29 → 2027-01-17 (+19d) |  | 10d → -3.02d |  |
| A87410 | Testing | 2026-12-30 → 2027-01-17 (+18d) | 2027-01-03 → 2027-01-21 (+18d) |  | 10d → -3.02d |  |
| A87420 | Backfilling & Compaction | 2027-01-04 → 2027-01-21 (+17d) | 2027-01-09 → 2027-01-27 (+18d) |  | 15d → 1.98d |  |
| A87430 | Chambers Construction works | 2027-01-04 → 2027-01-21 (+17d) | 2027-01-09 → 2027-01-27 (+18d) |  | 10d → -3.02d |  |
| A87440 | Valves & Fittings Installation | 2027-01-10 → 2027-01-27 (+17d) | 2027-01-14 → 2027-02-02 (+19d) |  | 10d → -3.02d | A87430, A11180, A11020 → A87430 |

| ID | Task | Start | Finish | Complete | Total float | Predecessors |
| --- | --- | --- | --- | --- | --- | --- |
| R112 | **Road 13** | 2026-10-25 → 2026-08-20 (-66d) | 2027-01-21 → 2027-03-17 (+55d) |  |  |  |
| A87460 | Road Crossing Works | 2026-10-25 → 2026-08-20 A (-66d) | 2026-11-11 → 2026-09-28 A (-44d) | 0% → 100% | 15d → none |  |
| A87450 | Trenching & Bedding | 2026-10-27 → 2027-01-02 (+67d) | 2026-11-11 → 2027-01-18 (+68d) |  | 15d → -40.02d |  |
| A87470 | Pipe Laying | 2026-11-05 → 2027-01-11 (+67d) | 2026-11-25 → 2027-02-01 (+68d) |  | 15d → -40.02d |  |
| A87480 | Testing | 2026-11-26 → 2027-02-01 (+67d) | 2026-11-30 → 2027-02-06 (+68d) |  | 15d → -40.02d |  |
| A87490 | Backfilling & Compaction | 2026-12-01 → 2027-02-06 (+67d) | 2026-12-19 → 2027-02-24 (+67d) |  | 33d → -22.02d |  |
| A87500 | Chambers Construction works | 2026-12-01 → 2027-02-06 (+67d) | 2026-12-19 → 2027-02-24 (+67d) |  | 15d → -40.02d |  |
| A87510 | Valves & Fittings Installation | 2027-01-02 → 2027-02-24 (+53d) | 2027-01-21 → 2027-03-17 (+55d) |  | 4d → -40.02d | A87500, A11180, A11020 → A87500 |
| R113 | **Road 14** | 2026-10-25 → 2026-08-20 (-66d) | 2027-01-21 → 2027-03-17 (+55d) |  |  |  |
| A87530 | Road Crossing Works | 2026-10-25 → 2026-08-20 A (-66d) | 2026-11-11 → 2026-09-28 A (-44d) | 0% → 100% | 15d → none |  |
| A87520 | Trenching & Bedding | 2026-10-27 → 2027-01-02 (+67d) | 2026-11-11 → 2027-01-18 (+68d) |  | 15d → -40.02d |  |
| A87540 | Pipe Laying | 2026-11-05 → 2027-01-11 (+67d) | 2026-11-25 → 2027-02-01 (+68d) |  | 15d → -40.02d |  |
| A87550 | Testing | 2026-11-26 → 2027-02-01 (+67d) | 2026-11-30 → 2027-02-06 (+68d) |  | 15d → -40.02d |  |
| A87560 | Backfilling & Compaction | 2026-12-01 → 2027-02-06 (+67d) | 2026-12-19 → 2027-02-24 (+67d) |  | 33d → -22.02d |  |
| A87570 | Chambers Construction works | 2026-12-01 → 2027-02-06 (+67d) | 2026-12-19 → 2027-02-24 (+67d) |  | 15d → -40.02d |  |
| A87580 | Valves & Fittings Installation | 2027-01-02 → 2027-02-24 (+53d) | 2027-01-21 → 2027-03-17 (+55d) |  | 4d → -40.02d | A87570, A11180, A11020 → A87570 |
| R114 | **Road 15** | 2026-11-26 → 2026-08-20 (-98d) | 2026-12-23 → 2027-01-30 (+38d) |  |  |  |
| A87600 | Road Crossing Works | 2026-11-26 → 2026-08-20 A (-98d) | 2026-11-30 → 2026-09-28 A (-63d) | 0% → 100% | 29d → none |  |
| A87590 | Trenching & Bedding | 2026-11-26 → 2027-01-02 (+37d) | 2026-11-30 → 2027-01-06 (+37d) |  | 29d → -0.02d |  |
| A87610 | Pipe Laying | 2026-12-06 → 2027-01-11 (+36d) | 2026-12-09 → 2027-01-16 (+38d) |  | 29d → -0.02d |  |
| A87620 | Testing | 2026-12-10 → 2027-01-16 (+37d) | 2026-12-14 → 2027-01-20 (+37d) |  | 29d → -0.02d |  |
| A87630 | Backfilling & Compaction | 2026-12-15 → 2027-01-20 (+36d) | 2026-12-19 → 2027-01-25 (+37d) |  | 33d → 3.98d |  |
| A87640 | Chambers Construction works | 2026-12-15 → 2027-01-20 (+36d) | 2026-12-19 → 2027-01-25 (+37d) |  | 29d → -0.02d |  |
| A87650 | Valves & Fittings Installation | 2026-12-20 → 2027-01-25 (+36d) | 2026-12-23 → 2027-01-30 (+38d) |  | 29d → -0.02d | A87640, A11020 → A87640 |
| R115 | **Road 16** | 2026-12-01 → 2026-08-20 (-103d) | 2026-12-28 → 2027-01-30 (+33d) |  |  |  |
| A87670 | Road Crossing Works | 2026-12-01 → 2026-08-20 A (-103d) | 2026-12-05 → 2026-09-28 A (-68d) | 0% → 100% | 25d → none |  |
| A87660 | Trenching & Bedding | 2026-12-01 → 2027-01-02 (+32d) | 2026-12-05 → 2027-01-06 (+32d) |  | 25d → -0.02d |  |
| A87680 | Pipe Laying | 2026-12-10 → 2027-01-11 (+32d) | 2026-12-14 → 2027-01-16 (+33d) |  | 25d → -0.02d |  |
| A87690 | Testing | 2026-12-15 → 2027-01-16 (+32d) | 2026-12-19 → 2027-01-20 (+32d) |  | 25d → -0.02d |  |
| A87700 | Backfilling & Compaction | 2026-12-20 → 2027-01-20 (+31d) | 2026-12-23 → 2027-01-25 (+33d) |  | 29d → 3.98d |  |
| A87710 | Chambers Construction works | 2026-12-20 → 2027-01-20 (+31d) | 2026-12-23 → 2027-01-25 (+33d) |  | 25d → -0.02d |  |
| A87720 | Valves & Fittings Installation | 2026-12-24 → 2027-01-25 (+32d) | 2026-12-28 → 2027-01-30 (+33d) |  | 25d → -0.02d | A87710, A11020 → A87710 |
| R1171 | **Collector 1** | 2026-10-21 → 2026-08-20 (-62d) | 2026-12-27 → 2027-03-09 (+72d) |  |  |  |
| A87740 | Road Crossing Works | 2026-10-21 → 2026-08-20 A (-62d) | 2026-11-02 → 2026-09-28 A (-35d) | 0% → 100% | 26d → none |  |
| A87730 | Trenching & Bedding | 2026-10-22 → 2027-01-02 (+72d) | 2026-11-02 → 2027-01-13 (+72d) |  | 26d → -33.02d |  |
| A87750 | Pipe Laying | 2026-11-01 → 2027-01-11 (+71d) | 2026-11-12 → 2027-01-24 (+73d) |  | 26d → -33.02d |  |
| A87760 | Testing | 2026-11-14 → 2027-01-24 (+71d) | 2026-11-17 → 2027-01-28 (+72d) |  | 26d → -33.02d |  |
| A87770 | Backfilling & Compaction | 2026-11-18 → 2027-01-28 (+71d) | 2026-11-30 → 2027-02-10 (+72d) |  | 49d → -10.02d |  |
| A87780 | Chambers Construction works | 2026-11-18 → 2027-01-28 (+71d) | 2026-12-06 → 2027-02-16 (+72d) |  | 26d → -33.02d |  |
| A87790 | Valves & Fittings Installation | 2026-12-07 → 2027-02-16 (+71d) | 2026-12-27 → 2027-03-09 (+72d) |  | 26d → -33.02d | A87780, A11020 → A87780 |
| IRRN | **IRRIGATION NETWORK** | 2026-10-13 → 2026-08-20 (-54d) | 2027-02-01 → 2027-05-24 (+112d) |  |  |  |
| R1 | **Road 1** | 2026-11-03 → 2026-08-20 (-75d) | 2026-12-02 → 2027-02-02 (+62d) |  |  |  |
| A88640 | Road Crossing Works | 2026-11-15 → 2026-08-20 A (-87d) | 2026-11-18 → 2026-09-28 A (-51d) | 0% → 100% | 62d → none |  |
| A88690 | Trench Excavation | 2026-11-03 → 2027-01-04 (+62d) | 2026-11-07 → 2027-01-07 (+61d) |  | 54d → 1d |  |
| A72005 | Pipe Laying | 2026-11-08 → 2027-01-09 (+62d) | 2026-11-14 → 2027-01-14 (+61d) |  | 54d → 1d |  |
| A88650 | Valve Chambers Civil Works | 2026-11-15 → 2027-01-16 (+62d) | 2026-11-21 → 2027-01-21 (+61d) |  | 54d → 1d |  |
| A88660 | Valve Installation | 2026-11-22 → 2027-01-23 (+62d) | 2026-11-25 → 2027-01-26 (+62d) |  | 54d → 1d |  |
| A88670 | Testing | 2026-11-26 → 2027-01-27 (+62d) | 2026-11-28 → 2027-01-28 (+61d) |  | 54d → 1d |  |
| A88680 | Backfilling | 2026-11-29 → 2027-01-30 (+62d) | 2026-12-02 → 2027-02-02 (+62d) |  | 54d → 1d |  |
| R11 | **Road 2** | 2026-11-04 → 2026-08-20 (-76d) | 2026-12-03 → 2027-02-01 (+60d) |  |  |  |
| A88710 | Road Crossing Works | 2026-11-16 → 2026-08-20 A (-88d) | 2026-11-19 → 2026-09-28 A (-52d) | 0% → 100% | 61d → none |  |
| A88760 | Trench Excavation | 2026-11-04 → 2027-01-02 (+59d) | 2026-11-08 → 2027-01-06 (+59d) |  | 53d → 2.98d |  |
| A88700 | Pipe Laying | 2026-11-09 → 2027-01-06 (+58d) | 2026-11-15 → 2027-01-13 (+59d) |  | 53d → 2.98d |  |
| A88720 | Valve Chambers Civil Works | 2026-11-16 → 2027-01-13 (+58d) | 2026-11-22 → 2027-01-20 (+59d) |  | 53d → 2.98d |  |
| A88730 | Valve Installation | 2026-11-23 → 2027-01-20 (+58d) | 2026-11-26 → 2027-01-25 (+60d) |  | 53d → 2.98d |  |
| A88740 | Testing | 2026-11-28 → 2027-01-25 (+58d) | 2026-11-29 → 2027-01-27 (+59d) |  | 53d → 2.98d |  |
| A88750 | Backfilling | 2026-11-30 → 2027-01-27 (+58d) | 2026-12-03 → 2027-02-01 (+60d) |  | 53d → 2.98d |  |
| R1111 | **Road 5** | 2026-11-08 → 2026-08-20 (-80d) | 2026-11-16 → 2027-03-18 (+122d) |  |  |  |
| A88850 | Road Crossing Works | 2026-11-11 → 2026-08-20 A (-83d) | 2026-11-11 → 2026-09-28 A (-44d) | 0% → 100% | 71d → none |  |
| A88900 | Trench Excavation | 2026-11-08 → 2027-03-09 (+121d) | 2026-11-08 → 2027-03-10 (+122d) |  | 68d → -36.1d |  |
| A88840 | Pipe Laying | 2026-11-09 → 2027-03-10 (+121d) | 2026-11-10 → 2027-03-13 (+123d) |  | 68d → -36.1d |  |
| A88860 | Valve Chambers Civil Works | 2026-11-11 → 2027-03-13 (+122d) | 2026-11-12 → 2027-03-15 (+123d) |  | 68d → -36.1d |  |
| A88870 | Valve Installation | 2026-11-14 → 2027-03-15 (+121d) | 2026-11-14 → 2027-03-16 (+122d) |  | 68d → -36.1d |  |
| A88880 | Testing | 2026-11-15 → 2027-03-16 (+121d) | 2026-11-15 → 2027-03-17 (+122d) |  | 68d → -36.1d |  |
| A88890 | Backfilling | 2026-11-16 → 2027-03-17 (+121d) | 2026-11-16 → 2027-03-18 (+122d) |  | 68d → -36.1d |  |
| R112 | **Road 3** | 2026-12-05 → 2026-08-20 (-107d) | 2027-01-18 → 2027-02-25 (+38d) |  |  |  |
| A88780 | Road Crossing Works | 2026-12-22 → 2026-08-20 A (-124d) | 2026-12-28 → 2026-09-28 A (-91d) | 0% → 100% | 26d → none |  |
| A88830 | Trench Excavation | 2026-12-05 → 2027-01-11 (+37d) | 2026-12-10 → 2027-01-18 (+39d) |  | 14d → -18.02d |  |
| A88770 | Pipe Laying | 2026-12-12 → 2027-01-18 (+37d) | 2026-12-21 → 2027-01-28 (+38d) |  | 14d → -18.02d |  |
| A88790 | Valve Chambers Civil Works | 2026-12-22 → 2027-01-28 (+37d) | 2026-12-31 → 2027-02-08 (+39d) |  | 14d → -18.02d |  |

| ID | Task | Start | Finish | Complete | Total float |
| --- | --- | --- | --- | --- | --- |
| A88800 | Valve Installation | 2027-01-02 → 2027-02-08 (+37d) | 2027-01-07 → 2027-02-15 (+39d) |  | 14d → -18.02d |
| A88810 | Testing | 2027-01-09 → 2027-02-15 (+37d) | 2027-01-11 → 2027-02-18 (+38d) |  | 14d → -18.02d |
| A88820 | Backfilling | 2027-01-12 → 2027-02-18 (+37d) | 2027-01-18 → 2027-02-25 (+38d) |  | 14d → -18.02d |
| R121 | **Road 4** | 2026-11-03 → 2026-08-20 (-75d) | 2026-11-11 → 2027-01-14 (+64d) |  |  |
| A88990 | Road Crossing Works | 2026-11-07 → 2026-08-20 A (-79d) | 2026-11-07 → 2026-09-28 A (-40d) | 0% → 100% | 75d → none |
| A89040 | Trench Excavation | 2026-11-03 → 2027-01-05 (+63d) | 2026-11-03 → 2027-01-06 (+64d) |  | 72d → 17.98d |
| A88980 | Pipe Laying | 2026-11-04 → 2027-01-06 (+63d) | 2026-11-05 → 2027-01-09 (+65d) |  | 72d → 17.98d |
| A89000 | Valve Chambers Civil Works | 2026-11-07 → 2027-01-09 (+63d) | 2026-11-08 → 2027-01-11 (+64d) |  | 72d → 17.98d |
| A89010 | Valve Installation | 2026-11-09 → 2027-01-11 (+63d) | 2026-11-09 → 2027-01-12 (+64d) |  | 72d → 17.98d |
| A89020 | Testing | 2026-11-10 → 2027-01-12 (+63d) | 2026-11-10 → 2027-01-13 (+64d) |  | 72d → 17.98d |
| A89030 | Backfilling | 2026-11-11 → 2027-01-13 (+63d) | 2026-11-11 → 2027-01-14 (+64d) |  | 72d → 17.98d |
| R1121 | **Road 7** | 2026-11-19 → 2026-08-20 (-91d) | 2026-12-26 → 2027-04-17 (+112d) |  |  |
| A89130 | Road Crossing Works | 2026-12-03 → 2026-08-20 A (-105d) | 2026-12-07 → 2026-09-28 A (-70d) | 0% → 100% | 14d → none |
| A89180 | Trench Excavation | 2026-11-19 → 2027-03-10 (+111d) | 2026-11-23 → 2027-03-15 (+112d) |  | 2d → -93.3d |
| A89120 | Pipe Laying | 2026-11-24 → 2027-03-15 (+111d) | 2026-12-02 → 2027-03-24 (+112d) |  | 2d → -93.3d |
| A89140 | Valve Chambers Civil Works | 2026-12-03 → 2027-03-24 (+111d) | 2026-12-12 → 2027-04-03 (+112d) |  | 2d → -93.3d |
| A89150 | Valve Installation | 2026-12-13 → 2027-04-03 (+111d) | 2026-12-16 → 2027-04-07 (+112d) |  | 2d → -93.3d |
| A89160 | Testing | 2026-12-17 → 2027-04-07 (+111d) | 2026-12-21 → 2027-04-12 (+112d) |  | 2d → -93.3d |
| A89170 | Backfilling | 2026-12-22 → 2027-04-12 (+111d) | 2026-12-26 → 2027-04-17 (+112d) |  | 2d → -93.3d |
| R113 | **Road 6** | 2026-10-13 → 2026-08-20 (-54d) | 2026-11-18 → 2027-03-10 (+112d) |  |  |
| A89060 | Road Crossing Works | 2026-10-27 → 2026-08-20 A (-68d) | 2026-10-31 → 2026-09-28 A (-33d) | 0% → 100% | 14d → none |
| A89110 | Trench Excavation | 2026-10-13 → 2027-02-01 (+111d) | 2026-10-17 → 2027-02-06 (+112d) |  | 2d → -93.3d |
| A89050 | Pipe Laying | 2026-10-18 → 2027-02-06 (+111d) | 2026-10-26 → 2027-02-15 (+112d) |  | 2d → -93.3d |
| A89070 | Valve Chambers Civil Works | 2026-10-27 → 2027-02-15 (+111d) | 2026-11-04 → 2027-02-24 (+112d) |  | 2d → -93.3d |
| A89080 | Valve Installation | 2026-11-05 → 2027-02-24 (+111d) | 2026-11-09 → 2027-03-01 (+112d) |  | 2d → -93.3d |
| A89090 | Testing | 2026-11-10 → 2027-03-01 (+111d) | 2026-11-14 → 2027-03-06 (+112d) |  | 2d → -93.3d |
| A89100 | Backfilling | 2026-11-15 → 2027-03-06 (+111d) | 2026-11-18 → 2027-03-10 (+112d) |  | 2d → -93.3d |
| R11111 | **Road 8** | 2026-12-27 → 2026-08-20 (-129d) | 2027-02-01 → 2027-05-24 (+112d) |  |  |
| A89200 | Road Crossing Works | 2027-01-10 → 2026-08-20 A (-143d) | 2027-01-13 → 2026-09-28 A (-107d) | 0% → 100% | 14d → none |
| A89250 | Trench Excavation | 2026-12-27 → 2027-04-17 (+111d) | 2026-12-30 → 2027-04-21 (+112d) |  | 2d → -93.3d |
| A89190 | Pipe Laying | 2026-12-31 → 2027-04-21 (+111d) | 2027-01-09 → 2027-05-01 (+112d) |  | 2d → -93.3d |
| A89210 | Valve Chambers Civil Works | 2027-01-10 → 2027-05-01 (+111d) | 2027-01-18 → 2027-05-10 (+112d) |  | 2d → -93.3d |
| A89220 | Valve Installation | 2027-01-19 → 2027-05-10 (+111d) | 2027-01-23 → 2027-05-15 (+112d) |  | 2d → -93.3d |
| A89230 | Testing | 2027-01-24 → 2027-05-15 (+111d) | 2027-01-27 → 2027-05-19 (+112d) |  | 2d → -93.3d |
| A89240 | Backfilling | 2027-01-28 → 2027-05-19 (+111d) | 2027-02-01 → 2027-05-24 (+112d) |  | 2d → -93.3d |
| R13 | **Road 9** | 2026-11-26 → 2026-08-20 (-98d) | 2026-12-05 → 2027-01-26 (+52d) |  |  |
| A89270 | Road Crossing Works | 2026-11-30 → 2026-08-20 A (-102d) | 2026-11-30 → 2026-09-28 A (-63d) | 0% → 100% | 55d → none |
| A89320 | Trench Excavation | 2026-11-26 → 2027-01-17 (+52d) | 2026-11-26 → 2027-01-18 (+53d) |  | 52d → 7.98d |
| A89260 | Pipe Laying | 2026-11-28 → 2027-01-18 (+51d) | 2026-11-29 → 2027-01-20 (+52d) |  | 52d → 7.98d |
| A89280 | Valve Chambers Civil Works | 2026-11-30 → 2027-01-20 (+51d) | 2026-12-01 → 2027-01-23 (+53d) |  | 52d → 7.98d |
| A89290 | Valve Installation | 2026-12-02 → 2027-01-23 (+52d) | 2026-12-02 → 2027-01-24 (+53d) |  | 52d → 7.98d |
| A89300 | Testing | 2026-12-03 → 2027-01-24 (+52d) | 2026-12-03 → 2027-01-25 (+53d) |  | 52d → 7.98d |
| A89310 | Backfilling | 2026-12-05 → 2027-01-25 (+51d) | 2026-12-05 → 2027-01-26 (+52d) |  | 52d → 7.98d |
| R12 | **Road 10** | 2026-12-09 → 2026-08-20 (-111d) | 2026-12-17 → 2027-01-21 (+35d) |  |  |
| A89340 | Road Crossing Works | 2026-12-13 → 2026-08-20 A (-115d) | 2026-12-13 → 2026-09-28 A (-76d) | 0% → 100% | 44d → none |
| A89390 | Trench Excavation | 2026-12-09 → 2027-01-12 (+34d) | 2026-12-09 → 2027-01-13 (+35d) |  | 41d → 11.98d |
| A89330 | Pipe Laying | 2026-12-10 → 2027-01-13 (+34d) | 2026-12-12 → 2027-01-16 (+35d) |  | 41d → 11.98d |
| A89350 | Valve Chambers Civil Works | 2026-12-13 → 2027-01-16 (+34d) | 2026-12-14 → 2027-01-18 (+35d) |  | 41d → 11.98d |
| A89360 | Valve Installation | 2026-12-15 → 2027-01-18 (+34d) | 2026-12-15 → 2027-01-19 (+35d) |  | 41d → 11.98d |
| A89370 | Testing | 2026-12-16 → 2027-01-19 (+34d) | 2026-12-16 → 2027-01-20 (+35d) |  | 41d → 11.98d |
| A89380 | Backfilling | 2026-12-17 → 2027-01-20 (+34d) | 2026-12-17 → 2027-01-21 (+35d) |  | 41d → 11.98d |
| R111 | **Road 11** | 2026-12-08 → 2026-08-20 (-110d) | 2026-12-16 → 2027-01-11 (+26d) |  |  |
| A89410 | Road Crossing Works | 2026-12-12 → 2026-08-20 A (-114d) | 2026-12-12 → 2026-09-28 A (-75d) | 0% → 100% | 45d → none |
| A89460 | Trench Excavation | 2026-12-08 → 2027-01-02 (+25d) | 2026-12-08 → 2027-01-03 (+26d) |  | 42d → 20.98d |
| A89400 | Pipe Laying | 2026-12-09 → 2027-01-03 (+25d) | 2026-12-10 → 2027-01-05 (+26d) |  | 42d → 20.98d |
| A89420 | Valve Chambers Civil Works | 2026-12-12 → 2027-01-05 (+24d) | 2026-12-13 → 2027-01-07 (+25d) |  | 42d → 20.98d |
| A89430 | Valve Installation | 2026-12-14 → 2027-01-07 (+24d) | 2026-12-14 → 2027-01-09 (+26d) |  | 42d → 20.98d |
| A89440 | Testing | 2026-12-15 → 2027-01-09 (+25d) | 2026-12-15 → 2027-01-10 (+26d) |  | 42d → 20.98d |
| A89450 | Backfilling | 2026-12-16 → 2027-01-10 (+25d) | 2026-12-16 → 2027-01-11 (+26d) |  | 42d → 20.98d |
| R1112 | **Road 12** | 2026-12-17 → 2026-08-20 (-119d) | 2026-12-26 → 2027-01-13 (+18d) |  |  |
| A89480 | Road Crossing Works | 2026-12-21 → 2026-08-20 A (-123d) | 2026-12-21 → 2026-09-28 A (-84d) | 0% → 100% | 37d → none |
| A89530 | Trench Excavation | 2026-12-17 → 2027-01-04 (+18d) | 2026-12-17 → 2027-01-05 (+19d) |  | 34d → 18.98d |
| A89470 | Pipe Laying | 2026-12-19 → 2027-01-05 (+17d) | 2026-12-20 → 2027-01-07 (+18d) |  | 34d → 18.98d |
| A89490 | Valve Chambers Civil Works | 2026-12-21 → 2027-01-07 (+17d) | 2026-12-22 → 2027-01-10 (+19d) |  | 34d → 18.98d |
| A89500 | Valve Installation | 2026-12-23 → 2027-01-10 (+18d) | 2026-12-23 → 2027-01-11 (+19d) |  | 34d → 18.98d |
| A89510 | Testing | 2026-12-24 → 2027-01-11 (+18d) | 2026-12-24 → 2027-01-12 (+19d) |  | 34d → 18.98d |
| A89520 | Backfilling | 2026-12-26 → 2027-01-12 (+17d) | 2026-12-26 → 2027-01-13 (+18d) |  | 34d → 18.98d |
| R122 | **Road 13** | 2026-11-11 → 2026-08-20 (-83d) | 2026-11-19 → 2027-01-26 (+68d) |  |  |
| A89550 | Road Crossing Works | 2026-11-15 → 2026-08-20 A (-87d) | 2026-11-15 → 2026-09-28 A (-48d) | 0% → 100% | 68d → none |
| A89600 | Trench Excavation | 2026-11-11 → 2027-01-17 (+67d) | 2026-11-11 → 2027-01-18 (+68d) |  | 65d → 7.98d |

| ID | Task | Start | Finish | Complete | Total float | Predecessors |
| --- | --- | --- | --- | --- | --- | --- |
| A89540 | Pipe Laying | 2026-11-12 → 2027-01-18 (+67d) | 2026-11-14 → 2027-01-20 (+67d) |  | 65d → 7.98d |  |
| A89560 | Valve Chambers Civil Works | 2026-11-15 → 2027-01-20 (+66d) | 2026-11-16 → 2027-01-23 (+68d) |  | 65d → 7.98d |  |
| A89570 | Valve Installation | 2026-11-17 → 2027-01-23 (+67d) | 2026-11-17 → 2027-01-24 (+68d) |  | 65d → 7.98d |  |
| A89580 | Testing | 2026-11-18 → 2027-01-24 (+67d) | 2026-11-18 → 2027-01-25 (+68d) |  | 65d → 7.98d |  |
| A89590 | Backfilling | 2026-11-19 → 2027-01-25 (+67d) | 2026-11-19 → 2027-01-26 (+68d) |  | 65d → 7.98d |  |
| R111111 | **Road 14** | 2026-11-11 → 2026-08-20 (-83d) | 2026-11-19 → 2027-01-26 (+68d) |  |  |  |
| A89620 | Road Crossing Works | 2026-11-15 → 2026-08-20 A (-87d) | 2026-11-15 → 2026-09-28 A (-48d) | 0% → 100% | 68d → none |  |
| A89670 | Trench Excavation | 2026-11-11 → 2027-01-17 (+67d) | 2026-11-11 → 2027-01-18 (+68d) |  | 65d → 7.98d |  |
| A89610 | Pipe Laying | 2026-11-12 → 2027-01-18 (+67d) | 2026-11-14 → 2027-01-20 (+67d) |  | 65d → 7.98d |  |
| A89630 | Valve Chambers Civil Works | 2026-11-15 → 2027-01-20 (+66d) | 2026-11-16 → 2027-01-23 (+68d) |  | 65d → 7.98d |  |
| A89640 | Valve Installation | 2026-11-17 → 2027-01-23 (+67d) | 2026-11-17 → 2027-01-24 (+68d) |  | 65d → 7.98d |  |
| A89650 | Testing | 2026-11-18 → 2027-01-24 (+67d) | 2026-11-18 → 2027-01-25 (+68d) |  | 65d → 7.98d |  |
| A89660 | Backfilling | 2026-11-19 → 2027-01-25 (+67d) | 2026-11-19 → 2027-01-26 (+68d) |  | 65d → 7.98d |  |
| R131 | **Road 15** | 2026-11-30 → 2026-08-20 (-102d) | 2026-12-08 → 2027-01-14 (+37d) |  |  |  |
| A89690 | Road Crossing Works | 2026-12-03 → 2026-08-20 A (-105d) | 2026-12-03 → 2026-09-28 A (-66d) | 0% → 100% | 52d → none |  |
| A89740 | Trench Excavation | 2026-11-30 → 2027-01-05 (+36d) | 2026-11-30 → 2027-01-06 (+37d) |  | 49d → 17.98d |  |
| A89680 | Pipe Laying | 2026-12-01 → 2027-01-06 (+36d) | 2026-12-02 → 2027-01-09 (+38d) |  | 49d → 17.98d |  |
| A89700 | Valve Chambers Civil Works | 2026-12-03 → 2027-01-09 (+37d) | 2026-12-05 → 2027-01-11 (+37d) |  | 49d → 17.98d |  |
| A89710 | Valve Installation | 2026-12-06 → 2027-01-11 (+36d) | 2026-12-06 → 2027-01-12 (+37d) |  | 49d → 17.98d |  |
| A89720 | Testing | 2026-12-07 → 2027-01-12 (+36d) | 2026-12-07 → 2027-01-13 (+37d) |  | 49d → 17.98d |  |
| A89730 | Backfilling | 2026-12-08 → 2027-01-13 (+36d) | 2026-12-08 → 2027-01-14 (+37d) |  | 49d → 17.98d |  |
| R11211 | **Road 16** | 2026-12-05 → 2026-08-20 (-107d) | 2026-12-13 → 2027-01-14 (+32d) |  |  |  |
| A89760 | Road Crossing Works | 2026-12-08 → 2026-08-20 A (-110d) | 2026-12-08 → 2026-09-28 A (-71d) | 0% → 100% | 48d → none |  |
| A89810 | Trench Excavation | 2026-12-05 → 2027-01-05 (+31d) | 2026-12-05 → 2027-01-06 (+32d) |  | 44d → 16.98d |  |
| A89750 | Pipe Laying | 2026-12-06 → 2027-01-06 (+31d) | 2026-12-07 → 2027-01-09 (+33d) |  | 45d → 17.98d |  |
| A89770 | Valve Chambers Civil Works | 2026-12-08 → 2027-01-09 (+32d) | 2026-12-09 → 2027-01-11 (+33d) |  | 45d → 17.98d |  |
| A89780 | Valve Installation | 2026-12-10 → 2027-01-11 (+32d) | 2026-12-10 → 2027-01-12 (+33d) |  | 45d → 17.98d |  |
| A89790 | Testing | 2026-12-12 → 2027-01-12 (+31d) | 2026-12-12 → 2027-01-13 (+32d) |  | 45d → 17.98d |  |
| A89800 | Backfilling | 2026-12-13 → 2027-01-13 (+31d) | 2026-12-13 → 2027-01-14 (+32d) |  | 45d → 17.98d |  |
| R1131 | **Road 17** | 2026-12-06 → 2026-08-20 (-108d) | 2026-12-14 → 2027-01-16 (+33d) |  |  |  |
| A89830 | Road Crossing Works | 2026-12-09 → 2026-08-20 A (-111d) | 2026-12-09 → 2026-09-28 A (-72d) | 0% → 100% | 47d → none |  |
| A89880 | Trench Excavation | 2026-12-06 → 2027-01-06 (+31d) | 2026-12-06 → 2027-01-07 (+32d) |  | 44d → 16.98d |  |
| A89820 | Pipe Laying | 2026-12-07 → 2027-01-07 (+31d) | 2026-12-08 → 2027-01-10 (+33d) |  | 44d → 16.98d |  |
| A89840 | Valve Chambers Civil Works | 2026-12-09 → 2027-01-10 (+32d) | 2026-12-10 → 2027-01-12 (+33d) |  | 44d → 16.98d |  |
| A89850 | Valve Installation | 2026-12-12 → 2027-01-12 (+31d) | 2026-12-12 → 2027-01-13 (+32d) |  | 44d → 16.98d |  |
| A89860 | Testing | 2026-12-13 → 2027-01-13 (+31d) | 2026-12-13 → 2027-01-14 (+32d) |  | 44d → 16.98d |  |
| A89870 | Backfilling | 2026-12-14 → 2027-01-14 (+31d) | 2026-12-14 → 2027-01-16 (+33d) |  | 44d → 16.98d |  |
| R11112 | **Collector 1** | 2026-10-29 → 2026-08-20 (-70d) | 2026-11-28 → 2027-02-02 (+66d) |  |  |  |
| A88920 | Road Crossing Works | 2026-11-10 → 2026-08-20 A (-82d) | 2026-11-14 → 2026-09-28 A (-47d) | 0% → 100% | 66d → none |  |
| A88910 | Pipe Laying | 2026-11-03 → 2026-09-15 A (-49d) | 2026-11-09 → 2027-01-14 (+66d) | 0% → 80% | 58d → 1.78d |  |
| A88970 | Trench Excavation | 2026-10-29 → 2026-09-15 A (-44d) | 2026-11-02 → 2027-01-13 (+72d) | 0% → 80% | 58d → 1.78d |  |
| A88930 | Valve Chambers Civil Works | 2026-11-10 → 2027-01-14 (+65d) | 2026-11-16 → 2027-01-21 (+66d) |  | 58d → 1.78d |  |
| A88940 | Valve Installation | 2026-11-17 → 2027-01-21 (+65d) | 2026-11-21 → 2027-01-26 (+66d) |  | 58d → 1.78d |  |
| A88950 | Testing | 2026-11-22 → 2027-01-26 (+65d) | 2026-11-23 → 2027-01-28 (+66d) |  | 58d → 1.78d |  |
| A88960 | Backfilling | 2026-11-24 → 2027-01-28 (+65d) | 2026-11-28 → 2027-02-02 (+66d) |  | 58d → 1.78d |  |
| MVN | **MV NETWORK** | 2026-06-09 → 2026-09-05 (+88d) | 2026-09-14 → 2027-04-07 (+205d) |  |  |  |
| 8 | **PSS 9067 - loop 01 Zone A** | 2026-06-09 → 2026-09-05 (+88d) | 2026-09-14 → 2027-03-23 (+190d) |  |  |  |
| A84010 | Trenching & excavation | 2026-06-09 → 2026-09-05 A (+88d) | 2026-06-17 → 2027-02-16 (+244d) | 0% → 35% | 17d → -165.31d | A1540, A1550, A1560, A1570, A1580, A10770 → A1540, A1550, A1560, A1570, A1580, A10690, A10700, A10710, A10720, A10730, A10740, A10750, A10760, A10770, A10780, A10790, A10800, A10810, A10820, A10830, A10840, A10850, A10860, A10870, A10880, A10890, A10900, A10910, A10920 |
| A84020 | Bedding preparation (sand) | 2026-06-14 → 2026-09-05 A (+83d) | 2026-06-27 → 2027-02-18 (+236d) | 0% → 35% | 43d → -152.65d |  |
| A84030 | Duct installation / concrete encasement | 2026-06-18 → 2026-09-05 A (+79d) | 2026-07-12 → 2027-02-25 (+228d) | 0% → 35% | 43d → -152.65d |  |
| A84040 | Backfilling & compaction | 2026-08-05 → 2026-09-05 A (+31d) | 2026-08-29 → 2027-03-07 (+190d) | 0% → 35% | 10d → -152.65d |  |
| A84050 | Cable Laying | 2026-08-01 → 2026-09-05 A (+35d) | 2026-08-24 → 2027-03-02 (+190d) | 0% → 35% | 10d → -152.65d | A84030 SS+4d, A84030 FF+4d, A10720 → A84030 SS+4d, A84030 FF+4d |
| A84070 | RMU / transformer installation | 2026-08-30 → 2027-03-07 (+189d) | 2026-09-09 → 2027-03-18 (+190d) |  | 10d → -152.65d | A84040, A10710 → A84040 |
| A84060 | Testing | 2026-09-10 → 2027-03-18 (+189d) | 2026-09-14 → 2027-03-23 (+190d) |  | 10d → -152.65d |  |
| 2 | **PSS 9067 - loop 02 Zone A** | 2026-06-18 → 2026-09-05 (+79d) | 2026-09-14 → 2027-03-30 (+197d) |  |  |  |
| A84080 | Trenching & excavation | 2026-06-18 → 2026-09-05 A (+79d) | 2026-06-27 → 2027-02-22 (+240d) | 0% → 33% | 17d → -165.31d |  |
| A84090 | Bedding preparation (sand) | 2026-06-23 → 2026-09-05 A (+74d) | 2026-07-01 → 2027-02-22 (+236d) | 0% → 33% | 35d → -158.27d |  |
| A84100 | Duct installation / concrete encasement | 2026-06-28 → 2026-09-05 A (+69d) | 2026-07-21 → 2027-03-04 (+226d) | 0% → 33% | 35d → -158.27d |  |
| A84110 | Backfilling & compaction | 2026-08-05 → 2026-09-05 A (+31d) | 2026-08-29 → 2027-03-14 (+197d) | 0% → 33% | 10d → -158.27d |  |
| A84120 | Cable Laying | 2026-08-01 → 2026-09-05 A (+35d) | 2026-08-24 → 2027-03-09 (+197d) | 0% → 33% | 10d → -158.27d | A84100 SS+4d, A84100 FF+4d, A10720 → A84100 SS+4d, A84100 FF+4d |
| A84140 | RMU / transformer installation | 2026-08-30 → 2027-03-14 (+196d) | 2026-09-09 → 2027-03-25 (+197d) |  | 10d → -158.27d | A84110, A10710 → A84110 |
| A84130 | Testing | 2026-09-10 → 2027-03-25 (+196d) | 2026-09-14 → 2027-03-30 (+197d) |  | 10d → -158.27d |  |
| 3 | **PSS 9067 - loop 03 Zone A** | 2026-06-28 → 2026-09-05 (+69d) | 2026-09-13 → 2027-04-07 (+206d) |  |  |  |
| A84150 | Trenching & excavation | 2026-06-28 → 2026-09-05 A (+69d) | 2026-07-06 → 2027-02-28 (+237d) | 0% → 41% | 17d → -165.31d |  |
| A84160 | Bedding preparation (sand) | 2026-07-01 → 2026-09-05 A (+66d) | 2026-07-14 → 2027-03-03 (+232d) | 0% → 41% | 17d → -165.31d |  |
| A84170 | Duct installation / concrete encasement | 2026-07-05 → 2026-09-05 A (+62d) | 2026-07-23 → 2027-03-07 (+227d) | 0% → 41% | 17d → -165.31d |  |
| A84180 | Backfilling & compaction | 2026-08-04 → 2026-09-05 A (+32d) | 2026-08-27 → 2027-03-22 (+207d) | 0% → 41% | 11d → -165.31d |  |
| A84190 | Cable Laying | 2026-08-01 → 2026-09-05 A (+35d) | 2026-08-19 → 2027-03-18 (+211d) | 0% → 41% | 11d → -165.31d | A84170, A10720 → A84170 |
| A84210 | RMU / transformer installation | 2026-08-29 → 2027-03-22 (+205d) | 2026-09-08 → 2027-04-03 (+207d) |  | 11d → -165.31d | A84180, A10710 → A84180 |
| A84200 | Testing | 2026-09-09 → 2027-04-03 (+206d) | 2026-09-13 → 2027-04-07 (+206d) |  | 11d → -165.31d |  |

| ID | Task | Start | Finish | Complete | Total float | Predecessors |
| --- | --- | --- | --- | --- | --- | --- |
| ROL | **ROAD LIGHING** | 2027-06-23 → 2026-09-05 (-291d) | 2027-11-17 → 2027-05-02 (-199d) |  |  |  |
| 2 | **PSS 9067 - loop 02 Zone A** | 2027-06-23 → 2026-09-05 (-291d) | 2027-11-17 → 2027-03-28 (-234d) |  |  |  |
| A84220 | Trenching for lighting network | 2027-06-23 → 2026-09-05 A (-291d) | 2027-07-04 → 2027-03-16 (-110d) | 0% → 78% | 25d → 118.85d |  |
| A84240 | Installation of lighting poles foundations | 2027-08-26 → 2026-09-05 A (-355d) | 2027-09-08 → 2027-03-17 (-175d) | 0% → 73% | 57d → 214.05d | A84250 SS+6d, A10810 → A84250 SS+6d |
| A84250 | LV cable laying & termination / Backfilling | 2027-07-11 → 2026-09-05 A (-309d) | 2027-07-21 → 2027-03-16 (-127d) | 0% → 78% | 36d → 155.07d | A84220 SS+6d, A10730, A10740, A10760 → A84220 SS+6d |
| A84260 | Street lighting sub-station construction & installation | 2027-07-22 → 2026-09-05 A (-320d) | 2027-08-07 → 2027-03-21 (-139d) | 0% → 73% | 36d → 155.07d | A84250, A10750 → A84250 |
| A84230 | Installation of lighting poles & luminaires | 2027-11-04 → 2027-03-14 (-235d) | 2027-11-17 → 2027-03-28 (-234d) |  | 3d → 214.05d | A84240 SS+6d, A84240 FF+6d, A10800, A10810 → A84240 SS+6d, A84240 FF+6d |
| 8 | **PSS 9067 - loop 01 Zone A** | 2027-07-05 → 2027-03-16 (-111d) | 2027-11-17 → 2027-04-20 (-211d) |  |  |  |
| A84270 | Trenching for lighting network | 2027-07-05 → 2027-03-16 (-111d) | 2027-07-15 → 2027-03-28 (-109d) |  | 25d → 118.85d |  |
| A84300 | LV cable laying & termination / Backfilling | 2027-07-12 → 2027-03-23 (-111d) | 2027-07-22 → 2027-04-04 (-109d) |  | 35d → 128.85d | A84270 SS+6d, A10730, A10740, A10760 → A84270 SS+6d |
| A84290 | Installation of lighting poles foundations | 2027-08-26 → 2027-03-30 (-149d) | 2027-09-08 → 2027-04-13 (-148d) |  | 57d → 193.85d | A84300 SS+6d, A10810 → A84300 SS+6d |
| A84310 | Street lighting sub-station construction & installation | 2027-07-24 → 2027-04-04 (-111d) | 2027-08-08 → 2027-04-20 (-110d) |  | 35d → 128.85d | A84300, A10750 → A84300 |
| A84280 | Installation of lighting poles & luminaires | 2027-11-04 → 2027-04-06 (-212d) | 2027-11-17 → 2027-04-20 (-211d) |  | 3d → 193.85d | A84290 SS+6d, A84290 FF+6d, A10800, A10810 → A84290 SS+6d, A84290 FF+6d |
| 3 | **PSS 9067 - loop 03 Zone A** | 2027-07-17 → 2027-03-28 (-111d) | 2027-11-17 → 2027-05-02 (-199d) |  |  |  |
| A84320 | Trenching for lighting network | 2027-07-17 → 2027-03-28 (-111d) | 2027-07-27 → 2027-04-08 (-110d) |  | 25d → 118.85d |  |
| A84350 | LV cable laying & termination / Backfilling | 2027-07-24 → 2027-04-04 (-111d) | 2027-08-03 → 2027-04-15 (-110d) |  | 25d → 118.85d | A84320 SS+6d, A84320 FF+6d, A10730, A10740, A10760 → A84320 SS+6d, A84320 FF+6d |
| A84340 | Installation of lighting poles foundations | 2027-08-26 → 2027-04-11 (-137d) | 2027-09-08 → 2027-04-25 (-136d) |  | 57d → 183.85d | A84350 SS+6d, A10810 → A84350 SS+6d |
| A84360 | Street lighting sub-station construction & installation | 2027-08-04 → 2027-04-15 (-111d) | 2027-08-19 → 2027-05-02 (-109d) |  | 25d → 118.85d | A84350, A10750 → A84350 |
| A84330 | Installation of lighting poles & luminaires | 2027-11-04 → 2027-04-18 (-200d) | 2027-11-17 → 2027-05-02 (-199d) |  | 3d → 183.85d | A84340 SS+6d, A84340 FF+6d, A10800, A10810 → A84340 SS+6d, A84340 FF+6d |
| COM | **TELECOMMUNICATION** | 2026-09-24 → 2026-08-20 (-35d) | 2027-01-24 → 2027-03-13 (+48d) |  |  |  |
| R1 | **Road 1** | 2026-09-24 → 2026-08-20 (-35d) | 2027-01-24 → 2027-03-13 (+48d) |  |  |  |
| A90960 | Road Crossing Encasement | 2026-10-18 → 2026-08-20 A (-59d) | 2026-10-28 → 2026-09-28 A (-30d) | 0% → 100% | 64d → none |  |
| A90940 | Excavation | 2026-09-24 → 2027-01-25 (+123d) | 2026-10-05 → 2027-02-06 (+124d) |  | 64d → -31.9d | A5000, A5010, A5020, A5030, A5040, A58910 → A5000, A5010, A5020, A5030, A5040, A10250 SS+10d, A11110, A10250 FF+10d, A58910 |
| A90950 | Duct Jointing & Laying | 2026-10-06 → 2027-02-06 (+123d) | 2026-10-17 → 2027-02-17 (+123d) |  | 64d → -31.9d |  |
| A90970 | Manhole Civil Works | 2027-01-02 → 2027-02-17 (+46d) | 2027-01-12 → 2027-03-01 (+48d) |  | 9d → -31.9d | A90960, A10250, A11110 → A90960 |
| A90980 | Backfilling & Compaction | 2027-01-13 → 2027-03-01 (+47d) | 2027-01-24 → 2027-03-13 (+48d) |  | 9d → -31.9d |  |
| R2 | **Road 2** | 2026-09-24 → 2026-08-20 (-35d) | 2027-01-17 → 2027-02-10 (+24d) |  |  |  |
| A91010 | Road Crossing Encasement | 2026-10-18 → 2026-08-20 A (-59d) | 2026-10-28 → 2026-09-28 A (-30d) | 0% → 100% | 70d → none |  |
| A90990 | Excavation | 2026-09-24 → 2027-01-02 (+100d) | 2026-10-05 → 2027-01-13 (+100d) |  | 70d → -5.02d | A58910 → A58910, A11110 |
| A91000 | Duct Jointing & Laying | 2026-10-06 → 2027-01-13 (+99d) | 2026-10-17 → 2027-01-25 (+100d) |  | 70d → -5.02d |  |
| A91020 | Manhole Civil Works | 2027-01-02 → 2027-01-25 (+23d) | 2027-01-05 → 2027-01-30 (+25d) |  | 15d → -5.02d | A91010, A10250, A11110 → A91010 |
| A91030 | Backfilling & Compaction | 2027-01-06 → 2027-01-30 (+24d) | 2027-01-17 → 2027-02-10 (+24d) |  | 15d → -5.02d |  |
| R3 | **Road 3** | 2026-09-24 → 2026-08-20 (-35d) | 2027-01-17 → 2027-02-10 (+24d) |  |  |  |
| A91060 | Road Crossing Encasement | 2026-10-18 → 2026-08-20 A (-59d) | 2026-10-28 → 2026-09-28 A (-30d) | 0% → 100% | 70d → none |  |
| A91040 | Excavation | 2026-09-24 → 2027-01-02 (+100d) | 2026-10-05 → 2027-01-13 (+100d) |  | 70d → -5.02d | A58910 → A58910, A11110 |
| A91050 | Duct Jointing & Laying | 2026-10-06 → 2027-01-13 (+99d) | 2026-10-17 → 2027-01-25 (+100d) |  | 70d → -5.02d |  |
| A91070 | Manhole Civil Works | 2027-01-02 → 2027-01-25 (+23d) | 2027-01-05 → 2027-01-30 (+25d) |  | 15d → -5.02d | A91060, A10250, A11110 → A91060 |
| A91080 | Backfilling & Compaction | 2027-01-06 → 2027-01-30 (+24d) | 2027-01-17 → 2027-02-10 (+24d) |  | 15d → -5.02d |  |
| R4 | **Road 4** | 2026-09-24 → 2026-08-20 (-35d) | 2027-01-17 → 2027-02-10 (+24d) |  |  |  |
| A91110 | Road Crossing Encasement | 2026-10-18 → 2026-08-20 A (-59d) | 2026-10-28 → 2026-09-28 A (-30d) | 0% → 100% | 70d → none |  |
| A91090 | Excavation | 2026-09-24 → 2027-01-02 (+100d) | 2026-10-05 → 2027-01-13 (+100d) |  | 70d → -5.02d | A58910 → A58910, A11110 |
| A91100 | Duct Jointing & Laying | 2026-10-06 → 2027-01-13 (+99d) | 2026-10-17 → 2027-01-25 (+100d) |  | 70d → -5.02d |  |
| A91120 | Manhole Civil Works | 2027-01-02 → 2027-01-25 (+23d) | 2027-01-05 → 2027-01-30 (+25d) |  | 15d → -5.02d | A91110, A10250, A11110 → A91110 |
| A91130 | Backfilling & Compaction | 2027-01-06 → 2027-01-30 (+24d) | 2027-01-17 → 2027-02-10 (+24d) |  | 15d → -5.02d |  |
| R5 | **Road 5** | 2026-09-24 → 2026-08-20 (-35d) | 2027-01-17 → 2027-02-10 (+24d) |  |  |  |
| A91160 | Road Crossing Encasement | 2026-10-18 → 2026-08-20 A (-59d) | 2026-10-28 → 2026-09-28 A (-30d) | 0% → 100% | 70d → none |  |
| A91140 | Excavation | 2026-09-24 → 2027-01-02 (+100d) | 2026-10-05 → 2027-01-13 (+100d) |  | 70d → -5.02d | A58910 → A58910, A11110 |
| A91150 | Duct Jointing & Laying | 2026-10-06 → 2027-01-13 (+99d) | 2026-10-17 → 2027-01-25 (+100d) |  | 70d → -5.02d |  |
| A91170 | Manhole Civil Works | 2027-01-02 → 2027-01-25 (+23d) | 2027-01-05 → 2027-01-30 (+25d) |  | 15d → -5.02d | A91160, A10250, A11110 → A91160 |
| A91180 | Backfilling & Compaction | 2027-01-06 → 2027-01-30 (+24d) | 2027-01-17 → 2027-02-10 (+24d) |  | 15d → -5.02d |  |
| R6 | **Road 6** | 2026-09-24 → 2026-08-20 (-35d) | 2027-01-17 → 2027-02-10 (+24d) |  |  |  |
| A91210 | Road Crossing Encasement | 2026-10-18 → 2026-08-20 A (-59d) | 2026-10-28 → 2026-09-28 A (-30d) | 0% → 100% | 70d → none |  |
| A91190 | Excavation | 2026-09-24 → 2027-01-02 (+100d) | 2026-10-05 → 2027-01-13 (+100d) |  | 70d → -5.02d | A58910 → A58910, A11110 |
| A91200 | Duct Jointing & Laying | 2026-10-06 → 2027-01-13 (+99d) | 2026-10-17 → 2027-01-25 (+100d) |  | 70d → -5.02d |  |
| A91220 | Manhole Civil Works | 2027-01-02 → 2027-01-25 (+23d) | 2027-01-05 → 2027-01-30 (+25d) |  | 15d → -5.02d | A91210, A10250, A11110 → A91210 |
| A91230 | Backfilling & Compaction | 2027-01-06 → 2027-01-30 (+24d) | 2027-01-17 → 2027-02-10 (+24d) |  | 15d → -5.02d |  |
| R7 | **Road 7** | 2026-09-24 → 2026-08-20 (-35d) | 2027-01-17 → 2027-02-10 (+24d) |  |  |  |
| A91260 | Road Crossing Encasement | 2026-10-18 → 2026-08-20 A (-59d) | 2026-10-28 → 2026-09-28 A (-30d) | 0% → 100% | 70d → none |  |
| A91240 | Excavation | 2026-09-24 → 2027-01-02 (+100d) | 2026-10-05 → 2027-01-13 (+100d) |  | 70d → -5.02d | A58910 → A58910, A11110 |
| A91250 | Duct Jointing & Laying | 2026-10-06 → 2027-01-13 (+99d) | 2026-10-17 → 2027-01-25 (+100d) |  | 70d → -5.02d |  |
| A91270 | Manhole Civil Works | 2027-01-02 → 2027-01-25 (+23d) | 2027-01-05 → 2027-01-30 (+25d) |  | 15d → -5.02d | A91260, A10250, A11110 → A91260 |
| A91280 | Backfilling & Compaction | 2027-01-06 → 2027-01-30 (+24d) | 2027-01-17 → 2027-02-10 (+24d) |  | 15d → -5.02d |  |
| R8 | **Road 8** | 2026-09-24 → 2026-08-20 (-35d) | 2027-01-17 → 2027-02-10 (+24d) |  |  |  |
| A91310 | Road Crossing Encasement | 2026-10-18 → 2026-08-20 A (-59d) | 2026-10-28 → 2026-09-28 A (-30d) | 0% → 100% | 70d → none |  |
| A91290 | Excavation | 2026-09-24 → 2027-01-02 (+100d) | 2026-10-05 → 2027-01-13 (+100d) |  | 70d → -5.02d | A58910 → A58910, A11110 |
| A91300 | Duct Jointing & Laying | 2026-10-06 → 2027-01-13 (+99d) | 2026-10-17 → 2027-01-25 (+100d) |  | 70d → -5.02d |  |
| A91320 | Manhole Civil Works | 2027-01-02 → 2027-01-25 (+23d) | 2027-01-05 → 2027-01-30 (+25d) |  | 15d → -5.02d | A91310, A10250, A11110 → A91310 |
| A91330 | Backfilling & Compaction | 2027-01-06 → 2027-01-30 (+24d) | 2027-01-17 → 2027-02-10 (+24d) |  | 15d → -5.02d |  |
| R9 | **Road 9** | 2026-09-24 → 2026-08-20 (-35d) | 2027-01-17 → 2027-02-10 (+24d) |  |  |  |
| A91360 | Road Crossing Encasement | 2026-10-18 → 2026-08-20 A (-59d) | 2026-10-28 → 2026-09-28 A (-30d) | 0% → 100% | 70d → none |  |

| ID | Task | Start | Finish | Duration | Complete | Total float | Predecessors |
| --- | --- | --- | --- | --- | --- | --- | --- |
| A91340 | Excavation | 2026-09-24 → 2027-01-02 (+100d) | 2026-10-05 → 2027-01-13 (+100d) |  |  | 70d → -5.02d | A58910 → A58910, A11110 |
| A91350 | Duct Jointing & Laying | 2026-10-06 → 2027-01-13 (+99d) | 2026-10-17 → 2027-01-25 (+100d) |  |  | 70d → -5.02d |  |
| A91370 | Manhole Civil Works | 2027-01-02 → 2027-01-25 (+23d) | 2027-01-05 → 2027-01-30 (+25d) |  |  | 15d → -5.02d | A91360, A10250, A11110 → A91360 |
| A91380 | Backfilling & Compaction | 2027-01-06 → 2027-01-30 (+24d) | 2027-01-17 → 2027-02-10 (+24d) |  |  | 15d → -5.02d |  |
| R10 | **Road 10** | 2026-09-24 → 2026-08-20 (-35d) | 2027-01-17 → 2027-02-10 (+24d) |  |  |  |  |
| A91410 | Road Crossing Encasement | 2026-10-18 → 2026-08-20 A (-59d) | 2026-10-28 → 2026-09-28 A (-30d) |  | 0% → 100% | 70d → none |  |
| A91390 | Excavation | 2026-09-24 → 2027-01-02 (+100d) | 2026-10-05 → 2027-01-13 (+100d) |  |  | 70d → -5.02d | A58910 → A58910, A11110 |
| A91400 | Duct Jointing & Laying | 2026-10-06 → 2027-01-13 (+99d) | 2026-10-17 → 2027-01-25 (+100d) |  |  | 70d → -5.02d |  |
| A91420 | Manhole Civil Works | 2027-01-02 → 2027-01-25 (+23d) | 2027-01-12 → 2027-02-06 (+25d) |  |  | 15d → -5.02d | A91410, A10250, A11110 → A91410 |
| A91430 | Backfilling & Compaction | 2027-01-13 → 2027-02-06 (+24d) | 2027-01-17 → 2027-02-10 (+24d) |  |  | 15d → -5.02d |  |
| R11 | **Road 11** | 2026-09-24 → 2026-08-20 (-35d) | 2027-01-17 → 2027-02-10 (+24d) |  |  |  |  |
| A91460 | Road Crossing Encasement | 2026-10-18 → 2026-08-20 A (-59d) | 2026-10-28 → 2026-09-28 A (-30d) |  | 0% → 100% | 70d → none |  |
| A91440 | Excavation | 2026-09-24 → 2027-01-02 (+100d) | 2026-10-05 → 2027-01-13 (+100d) |  |  | 70d → -5.02d | A58910 → A58910, A11110 |
| A91450 | Duct Jointing & Laying | 2026-10-06 → 2027-01-13 (+99d) | 2026-10-17 → 2027-01-25 (+100d) |  |  | 70d → -5.02d |  |
| A91470 | Manhole Civil Works | 2027-01-02 → 2027-01-25 (+23d) | 2027-01-12 → 2027-02-06 (+25d) |  |  | 15d → -5.02d | A91460, A10250, A11110 → A91460 |
| A91480 | Backfilling & Compaction | 2027-01-13 → 2027-02-06 (+24d) | 2027-01-17 → 2027-02-10 (+24d) |  |  | 15d → -5.02d |  |
| R12 | **Road 12** | 2026-09-24 → 2026-08-20 (-35d) | 2027-01-17 → 2027-02-10 (+24d) |  |  |  |  |
| A91510 | Road Crossing Encasement | 2026-10-18 → 2026-08-20 A (-59d) | 2026-10-28 → 2026-09-28 A (-30d) |  | 0% → 100% | 70d → none |  |
| A91490 | Excavation | 2026-09-24 → 2027-01-02 (+100d) | 2026-10-05 → 2027-01-13 (+100d) |  |  | 70d → -5.02d | A58910 → A58910, A11110 |
| A91500 | Duct Jointing & Laying | 2026-10-06 → 2027-01-13 (+99d) | 2026-10-17 → 2027-01-25 (+100d) |  |  | 70d → -5.02d |  |
| A91520 | Manhole Civil Works | 2027-01-02 → 2027-01-25 (+23d) | 2027-01-12 → 2027-02-06 (+25d) |  |  | 15d → -5.02d | A91510, A10250, A11110 → A91510 |
| A91530 | Backfilling & Compaction | 2027-01-13 → 2027-02-06 (+24d) | 2027-01-17 → 2027-02-10 (+24d) |  |  | 15d → -5.02d |  |
| R13 | **Road 13** | 2026-09-24 → 2026-08-20 (-35d) | 2027-01-17 → 2027-02-10 (+24d) |  |  |  |  |
| A91560 | Road Crossing Encasement | 2026-10-18 → 2026-08-20 A (-59d) | 2026-10-28 → 2026-09-28 A (-30d) |  | 0% → 100% | 70d → none |  |
| A91540 | Excavation | 2026-09-24 → 2027-01-02 (+100d) | 2026-10-05 → 2027-01-13 (+100d) |  |  | 70d → -5.02d | A58910 → A58910, A11110 |
| A91550 | Duct Jointing & Laying | 2026-10-06 → 2027-01-13 (+99d) | 2026-10-17 → 2027-01-25 (+100d) |  |  | 70d → -5.02d |  |
| A91570 | Manhole Civil Works | 2027-01-02 → 2027-01-25 (+23d) | 2027-01-12 → 2027-02-06 (+25d) |  |  | 15d → -5.02d | A91560, A10250, A11110 → A91560 |
| A91580 | Backfilling & Compaction | 2027-01-13 → 2027-02-06 (+24d) | 2027-01-17 → 2027-02-10 (+24d) |  |  | 15d → -5.02d |  |
| R14 | **Road 14** | 2026-09-24 → 2026-08-20 (-35d) | 2027-01-17 → 2027-02-10 (+24d) |  |  |  |  |
| A91610 | Road Crossing Encasement | 2026-10-18 → 2026-08-20 A (-59d) | 2026-10-28 → 2026-09-28 A (-30d) |  | 0% → 100% | 70d → none |  |
| A91590 | Excavation | 2026-09-24 → 2027-01-02 (+100d) | 2026-10-05 → 2027-01-13 (+100d) |  |  | 70d → -5.02d | A58910 → A58910, A11110 |
| A91600 | Duct Jointing & Laying | 2026-10-06 → 2027-01-13 (+99d) | 2026-10-17 → 2027-01-25 (+100d) |  |  | 70d → -5.02d |  |
| A91620 | Manhole Civil Works | 2027-01-02 → 2027-01-25 (+23d) | 2027-01-12 → 2027-02-06 (+25d) |  |  | 15d → -5.02d | A91610, A10250, A11110 → A91610 |
| A91630 | Backfilling & Compaction | 2027-01-13 → 2027-02-06 (+24d) | 2027-01-17 → 2027-02-10 (+24d) |  |  | 15d → -5.02d |  |
| R15 | **Road 15** | 2026-09-24 → 2026-08-20 (-35d) | 2027-01-17 → 2027-02-10 (+24d) |  |  |  |  |
| A91660 | Road Crossing Encasement | 2026-10-18 → 2026-08-20 A (-59d) | 2026-10-28 → 2026-09-28 A (-30d) |  | 0% → 100% | 70d → none |  |
| A91640 | Excavation | 2026-09-24 → 2027-01-02 (+100d) | 2026-10-05 → 2027-01-13 (+100d) |  |  | 70d → -5.02d | A58910 → A58910, A11110 |
| A91650 | Duct Jointing & Laying | 2026-10-06 → 2027-01-13 (+99d) | 2026-10-17 → 2027-01-25 (+100d) |  |  | 70d → -5.02d |  |
| A91670 | Manhole Civil Works | 2027-01-02 → 2027-01-25 (+23d) | 2027-01-12 → 2027-02-06 (+25d) |  |  | 15d → -5.02d | A91660, A10250, A11110 → A91660 |
| A91680 | Backfilling & Compaction | 2027-01-13 → 2027-02-06 (+24d) | 2027-01-17 → 2027-02-10 (+24d) |  |  | 15d → -5.02d |  |
| R16 | **Road 16** | 2026-09-24 → 2026-08-20 (-35d) | 2027-01-17 → 2027-02-10 (+24d) |  |  |  |  |
| A91710 | Road Crossing Encasement | 2026-10-18 → 2026-08-20 A (-59d) | 2026-10-28 → 2026-09-28 A (-30d) |  | 0% → 100% | 70d → none |  |
| A91690 | Excavation | 2026-09-24 → 2027-01-02 (+100d) | 2026-10-05 → 2027-01-13 (+100d) |  |  | 70d → -5.02d | A58910 → A58910, A11110 |
| A91700 | Duct Jointing & Laying | 2026-10-06 → 2027-01-13 (+99d) | 2026-10-17 → 2027-01-25 (+100d) |  |  | 70d → -5.02d |  |
| A91720 | Manhole Civil Works | 2027-01-02 → 2027-01-25 (+23d) | 2027-01-12 → 2027-02-06 (+25d) |  |  | 15d → -5.02d | A91710, A10250, A11110 → A91710 |
| A91730 | Backfilling & Compaction | 2027-01-13 → 2027-02-06 (+24d) | 2027-01-17 → 2027-02-10 (+24d) |  |  | 15d → -5.02d |  |
| R17 | **Road 17** | 2026-09-24 → 2026-08-20 (-35d) | 2027-01-17 → 2027-02-10 (+24d) |  |  |  |  |
| A91760 | Road Crossing Encasement | 2026-10-18 → 2026-08-20 A (-59d) | 2026-10-28 → 2026-09-28 A (-30d) |  | 0% → 100% | 70d → none |  |
| A91740 | Excavation | 2026-09-24 → 2027-01-02 (+100d) | 2026-10-05 → 2027-01-13 (+100d) |  |  | 70d → -5.02d | A58910 → A58910, A11110 |
| A91750 | Duct Jointing & Laying | 2026-10-06 → 2027-01-13 (+99d) | 2026-10-17 → 2027-01-25 (+100d) |  |  | 70d → -5.02d |  |
| A91770 | Manhole Civil Works | 2027-01-02 → 2027-01-25 (+23d) | 2027-01-12 → 2027-02-06 (+25d) |  |  | 15d → -5.02d | A91760, A10250, A11110 → A91760 |
| A91780 | Backfilling & Compaction | 2027-01-13 → 2027-02-06 (+24d) | 2027-01-17 → 2027-02-10 (+24d) |  |  | 15d → -5.02d |  |
| CO1 | **COLLECTOR 1** | 2026-09-24 → 2026-08-20 (-35d) | 2027-01-17 → 2027-02-10 (+24d) |  |  |  |  |
| A91810 | Road Crossing Encasement | 2026-10-18 → 2026-08-20 A (-59d) | 2026-10-28 → 2026-09-28 A (-30d) |  | 0% → 100% | 70d → none |  |
| A91790 | Excavation | 2026-09-24 → 2027-01-02 (+100d) | 2026-10-05 → 2027-01-13 (+100d) |  |  | 70d → -5.02d | A58910 → A58910, A11110 |
| A91800 | Duct Jointing & Laying | 2026-10-06 → 2027-01-13 (+99d) | 2026-10-17 → 2027-01-25 (+100d) |  |  | 70d → -5.02d |  |
| A91820 | Manhole Civil Works | 2027-01-02 → 2027-01-25 (+23d) | 2027-01-05 → 2027-01-30 (+25d) |  |  | 15d → -5.02d | A91810, A10250, A11110 → A91810 |
| A91830 | Backfilling & Compaction | 2027-01-06 → 2027-01-30 (+24d) | 2027-01-17 → 2027-02-10 (+24d) |  |  | 15d → -5.02d |  |
| RW | **ROADS WORK** | 2026-04-18 → 2026-08-15 (+119d) | 2027-08-05 → 2027-04-20 (-107d) |  |  |  |  |
| 1 | **Road 1** | 2026-04-18 → 2026-08-21 (+125d) | 2027-07-08 → 2027-03-22 (-108d) |  |  |  |  |
| AGG | **Aggregate Base Course** | 2026-04-18 → 2026-08-21 (+125d) | 2026-04-26 → 2026-11-29 (+217d) |  |  |  |  |
| A56660 | Aggregate base course | 2026-04-18 → 2026-08-21 A (+125d) | 2026-04-26 → 2026-11-29 (+217d) |  | 0% → 97% | 0d → -102.8d | A56620, A1650, A1660, A1670, A1680, A1690, A1700, A10280, A10290 SS+5d, A10300, A10290 FF+5d → A56620, A1650, A1660, A1670, A1680, A1690, A1700, A10270, A10280, A10290 SS+5d, A10300, A10290 FF+5d |
| BIT | **Bituminous Construction** | 2026-04-27 → 2026-08-21 (+116d) | 2026-04-29 → 2026-12-14 (+229d) |  |  |  |  |
| A56670 | Bituminous base course (Grading I - Class A) | 2026-04-27 → 2026-08-21 A (+116d) | 2026-04-29 → 2026-12-14 (+229d) |  | 0% → 97% | 133d → -62.25d | A56660 → A56660, A56710 |
| ASP | **Asphalt Wearing Course** | 2027-02-28 → 2027-02-21 (-7d) | 2027-03-13 → 2027-02-25 (-16d) |  |  |  |  |
| A56680 | Bituminous concrete wearing course | 2027-02-28 → 2027-02-21 (-7d) | 2027-03-13 → 2027-02-25 (-16d) | 12d → 4d |  | 1d → 6.3d | A56670, A88420, Asphalt Wearing Course SS, A4825 → A56670, A88420 |
| CON | **Precast Concrete Curb** | 2027-05-26 → 2026-08-21 (-278d) | 2027-06-14 → 2026-12-14 (-182d) |  |  |  |  |
| A56690 | Concrete curb, Type (K1A) | 2027-05-26 → 2026-08-21 A (-278d) | 2027-06-03 → 2026-12-06 (-179d) |  | 0% → 24% | 25d → -62.25d | A56660, A56680, A10270 → A56660 |
| A56700 | Concrete curb, Type (K1B) | 2027-06-05 → 2026-08-21 A (-288d) | 2027-06-09 → 2026-12-10 (-181d) |  | 0% → 24% | 25d → -62.25d | A56690, A10270 → A56690 |
| A56710 | Concrete curb, Type (K2) | 2027-06-10 → 2026-08-21 A (-293d) | 2027-06-14 → 2026-12-14 (-182d) |  | 0% → 24% | 25d → -62.25d | A56700, A10270 → A56700 |

| ID | Task | Start | Finish | Duration | Complete | Total float | Predecessors |
| --- | --- | --- | --- | --- | --- | --- | --- |
| PAV | **Pavement Markings** | 2027-06-15 → 2027-02-25 (-110d) | 2027-06-19 → 2027-03-02 (-109d) |  |  |  |  |
| A56720 | Retroreflective Thermoplastic White Traffic lines | 2027-06-15 → 2027-02-25 (-110d) | 2027-06-16 → 2027-02-28 (-108d) |  |  | 25d → 126.1d |  |
| A56730 | Retroreflective Thermoplastic Yellow Traffic lines | 2027-06-17 → 2027-02-28 (-109d) | 2027-06-19 → 2027-03-02 (-109d) |  |  | 25d → 126.1d |  |
| TRS | **Traffic Signage** | 2027-06-20 → 2027-03-02 (-110d) | 2027-07-08 → 2027-03-22 (-108d) |  |  |  |  |
| A56740 | Traffic signs, ground mounted, 1 Sheet Alumenium, (breakaway) Single post | 2027-06-20 → 2027-03-02 (-110d) | 2027-06-22 → 2027-03-06 (-108d) |  |  | 25d → 126.1d |  |
| A56750 | Traffic signs, ground mounted, 2 Sheet Alumenium, (breakaway) Single post | 2027-06-23 → 2027-03-06 (-109d) | 2027-06-24 → 2027-03-08 (-108d) |  |  | 92d → 185.3d |  |
| A56760 | Traffic signs, ground mounted, Sheet Alumenium, (breakaway) Double post | 2027-06-26 → 2027-03-08 (-110d) | 2027-06-29 → 2027-03-13 (-108d) |  |  | 92d → 185.3d |  |
| A56770 | Retroreflective raised pavement markers (Type A) | 2027-06-30 → 2027-03-13 (-109d) | 2027-07-03 → 2027-03-16 (-109d) |  |  | 107d → 200.3d |  |
| A56780 | Ceramic raised pavement markers | 2027-07-04 → 2027-03-16 (-110d) | 2027-07-06 → 2027-03-20 (-108d) |  |  | 107d → 200.3d |  |
| A56790 | Solar powered lighting cateyes pavement markers | 2027-07-07 → 2027-03-20 (-109d) | 2027-07-08 → 2027-03-22 (-108d) |  |  | 126d → 219.3d |  |
| 2 | **Road 2** | 2026-04-27 → 2026-08-15 (+110d) | 2027-06-08 → 2027-03-28 (-72d) |  |  |  |  |
| AGG | **Aggregate Base Course** | 2026-04-27 → 2026-08-15 (+110d) | 2026-05-05 → 2026-09-20 (+138d) |  |  |  |  |
| A62580 | Aggregate base course | 2026-04-27 → 2026-08-15 A (+110d) | 2026-05-05 → 2026-09-20 A (+138d) |  | 0% → 100% | 0d → none |  |
| BIT | **Bituminous Construction** | 2026-05-06 → 2026-08-15 (+101d) | 2026-05-09 → 2026-09-20 (+134d) |  |  |  |  |
| A62590 | Bituminous base course (Grading I - Class A) | 2026-05-06 → 2026-08-15 A (+101d) | 2026-05-09 → 2026-09-20 A (+134d) |  | 0% → 100% | 125d → none | A62580 → A62580, A62630 |
| ASP | **Asphalt Wearing Course** | 2027-03-14 → 2027-02-25 (-17d) | 2027-03-30 → 2027-03-02 (-28d) |  |  |  |  |
| A62600 | Bituminous concrete wearing course | 2027-03-14 → 2027-02-25 (-17d) | 2027-03-30 → 2027-03-02 (-28d) | 15d → 4d |  | 65d → 10.3d |  |
| CON | **Precast Concrete Curb** | 2027-05-26 → 2026-08-29 (-270d) | 2027-06-06 → 2026-12-07 (-181d) |  |  |  |  |
| A62610 | Concrete curb, Type (K1A) | 2027-05-26 → 2026-08-29 A (-270d) | 2027-05-29 → 2026-12-01 (-179d) |  | 0% → 28% | 152d → -56.44d | A62580, A62600, A10270 → A62580 |
| A62620 | Concrete curb, Type (K1B) | 2027-05-30 → 2026-08-29 A (-274d) | 2027-06-01 → 2026-12-03 (-180d) |  | 0% → 28% | 152d → -56.44d | A62610, A10270 → A62610 |
| A62630 | Concrete curb, Type (K2) | 2027-06-02 → 2026-08-29 A (-277d) | 2027-06-06 → 2026-12-07 (-181d) |  | 0% → 28% | 152d → -56.44d | A62620, A10270 → A62620 |
| PAV | **Pavement Markings** | 2027-03-31 → 2027-03-02 (-29d) | 2027-04-04 → 2027-03-07 (-28d) |  |  |  |  |
| A62640 | Retroreflective Thermoplastic White Traffic lines | 2027-03-31 → 2027-03-02 (-29d) | 2027-04-01 → 2027-03-04 (-28d) |  |  | 156d → 180.3d |  |
| A62650 | Retroreflective Thermoplastic Yellow Traffic lines | 2027-04-03 → 2027-03-04 (-30d) | 2027-04-04 → 2027-03-07 (-28d) |  |  | 156d → 180.3d |  |
| TRS | **Traffic Signage** | 2027-04-05 → 2027-03-07 (-29d) | 2027-06-08 → 2027-03-28 (-72d) |  |  |  |  |
| A62660 | Traffic signs, ground mounted, 1 Sheet Alumenium, (breakaway) Single post | 2027-04-05 → 2027-03-07 (-29d) | 2027-04-07 → 2027-03-10 (-28d) |  |  | 156d → 180.3d |  |
| A62670 | Traffic signs, ground mounted, 2 Sheet Alumenium, (breakaway) Single post | 2027-04-08 → 2027-03-10 (-29d) | 2027-04-10 → 2027-03-13 (-28d) |  |  | 156d → 180.3d |  |
| A62680 | Traffic signs, ground mounted, Sheet Alumenium, (breakaway) Double post | 2027-04-11 → 2027-03-13 (-29d) | 2027-04-15 → 2027-03-18 (-28d) |  |  | 156d → 180.3d |  |
| A62690 | Retroreflective raised pavement markers (Type A) | 2027-04-17 → 2027-03-18 (-30d) | 2027-04-19 → 2027-03-22 (-28d) |  |  | 171d → 195.3d |  |
| A62700 | Ceramic raised pavement markers | 2027-04-20 → 2027-03-22 (-29d) | 2027-04-22 → 2027-03-25 (-28d) |  |  | 171d → 195.3d |  |
| A62710 | Solar powered lighting cateyes pavement markers | 2027-06-07 → 2027-03-25 (-74d) | 2027-06-08 → 2027-03-28 (-72d) |  |  | 152d → 214.3d | A62700, A62630 → A62700 |
| 3 | **Road 3** | 2026-05-06 → 2026-08-29 (+115d) | 2027-07-15 → 2027-04-14 (-92d) |  |  |  |  |
| AGG | **Aggregate Base Course** | 2026-05-06 → 2026-08-29 (+115d) | 2026-05-12 → 2026-11-30 (+202d) |  |  |  |  |
| A56800 | Aggregate base course | 2026-05-06 → 2026-08-29 A (+115d) | 2026-05-12 → 2026-11-30 (+202d) |  | 0% → 75% | 0d → -102.8d |  |
| BIT | **Bituminous Construction** | 2026-05-13 → 2026-08-29 (+108d) | 2026-06-09 → 2026-12-16 (+190d) |  |  |  |  |
| A56810 | Bituminous base course (Grading I - Class A) | 2026-05-13 → 2026-08-29 A (+108d) | 2026-06-09 → 2026-12-16 (+190d) | 24d → 5d | 0% → 75% | 98d → -64.99d | A56800 → A56800, A56850 |
| ASP | **Asphalt Wearing Course** | 2027-03-31 → 2027-03-02 (-29d) | 2027-04-19 → 2027-03-09 (-41d) |  |  |  |  |
| A56820 | Bituminous concrete wearing course | 2027-03-31 → 2027-03-02 (-29d) | 2027-04-19 → 2027-03-09 (-41d) | 17d → 6d |  | 65d → 10.3d |  |
| CON | **Precast Concrete Curb** | 2027-05-26 → 2026-11-30 (-177d) | 2027-06-09 → 2026-12-15 (-176d) |  |  |  |  |
| A56830 | Concrete curb, Type (K1A) | 2027-05-26 → 2026-11-30 (-177d) | 2027-05-30 → 2026-12-05 (-176d) |  |  | 89d → -64.99d | A56800, A56820, A10270 → A56800 |
| A56840 | Concrete curb, Type (K1B) | 2027-05-31 → 2026-12-05 (-177d) | 2027-06-03 → 2026-12-09 (-176d) |  |  | 89d → -64.99d | A56830, A10270 → A56830 |
| A56850 | Concrete curb, Type (K2) | 2027-06-05 → 2026-12-09 (-178d) | 2027-06-09 → 2026-12-15 (-176d) |  |  | 89d → -64.99d | A56840, A10270 → A56840 |
| PAV | **Pavement Markings** | 2027-06-10 → 2027-03-09 (-93d) | 2027-06-16 → 2027-03-16 (-92d) |  |  |  |  |
| A56860 | Retroreflective Thermoplastic White Traffic lines | 2027-06-10 → 2027-03-09 (-93d) | 2027-06-13 → 2027-03-13 (-92d) |  |  | 89d → 168.3d |  |
| A56870 | Retroreflective Thermoplastic Yellow Traffic lines | 2027-06-14 → 2027-03-13 (-93d) | 2027-06-16 → 2027-03-16 (-92d) |  |  | 89d → 168.3d |  |
| TRS | **Traffic Signage** | 2027-06-17 → 2027-03-16 (-93d) | 2027-07-15 → 2027-04-14 (-92d) |  |  |  |  |
| A56880 | Traffic signs, ground mounted, 1 Sheet Alumenium, (breakaway) Single post | 2027-06-17 → 2027-03-16 (-93d) | 2027-06-21 → 2027-03-21 (-92d) |  |  | 89d → 168.3d |  |
| A56890 | Traffic signs, ground mounted, 2 Sheet Alumenium, (breakaway) Single post | 2027-06-22 → 2027-03-21 (-93d) | 2027-06-24 → 2027-03-24 (-92d) |  |  | 89d → 168.3d |  |
| A56900 | Traffic signs, ground mounted, Sheet Alumenium, (breakaway) Double post | 2027-06-26 → 2027-03-24 (-94d) | 2027-07-03 → 2027-04-01 (-93d) |  |  | 89d → 168.3d |  |
| A56910 | Retroreflective raised pavement markers (Type A) | 2027-07-04 → 2027-04-01 (-94d) | 2027-07-07 → 2027-04-06 (-92d) |  |  | 102d → 181.3d |  |
| A56920 | Ceramic raised pavement markers | 2027-07-08 → 2027-04-06 (-93d) | 2027-07-12 → 2027-04-11 (-92d) |  |  | 102d → 181.3d |  |
| A56930 | Solar powered lighting cateyes pavement markers | 2027-07-13 → 2027-04-11 (-93d) | 2027-07-15 → 2027-04-14 (-92d) |  |  | 120d → 199.3d |  |
| 4 | **Road 4** | 2026-05-13 → 2026-08-29 (+108d) | 2027-06-14 → 2027-03-22 (-84d) |  |  |  |  |
| AGG | **Aggregate Base Course** | 2026-05-13 → 2026-08-29 (+108d) | 2026-05-19 → 2026-11-30 (+195d) |  |  |  |  |
| A56940 | Aggregate base course | 2026-05-13 → 2026-08-29 A (+108d) | 2026-05-19 → 2026-11-30 (+195d) |  | 0% → 98% | 0d → -102.8d |  |
| BIT | **Bituminous Construction** | 2026-05-20 → 2026-08-29 (+101d) | 2026-05-20 → 2026-12-08 (+202d) |  |  |  |  |
| A56950 | Bituminous base course (Grading I - Class A) | 2026-05-20 → 2026-08-29 A (+101d) | 2026-05-20 → 2026-12-08 (+202d) |  | 0% → 98% | 115d → -57.88d | A56940 → A56940, A56990 |
| ASP | **Asphalt Wearing Course** | 2027-04-20 → 2027-03-09 (-42d) | 2027-04-26 → 2027-03-10 (-47d) |  |  |  |  |
| A56960 | Bituminous concrete wearing course | 2027-04-20 → 2027-03-09 (-42d) | 2027-04-26 → 2027-03-10 (-47d) | 6d → 1d |  | 65d → 10.3d |  |
| CON | **Precast Concrete Curb** | 2027-05-26 → 2026-11-30 (-177d) | 2027-06-02 → 2026-12-08 (-176d) |  |  |  |  |
| A56970 | Concrete curb, Type (K1A) | 2027-05-26 → 2026-11-30 (-177d) | 2027-05-29 → 2026-12-03 (-177d) |  |  | 126d → -57.88d | A56940, A56960, A10270 → A56940 |
| A56980 | Concrete curb, Type (K1B) | 2027-05-30 → 2026-12-03 (-178d) | 2027-05-31 → 2026-12-06 (-176d) |  |  | 126d → -57.88d | A56970, A10270 → A56970 |
| A56990 | Concrete curb, Type (K2) | 2027-06-01 → 2026-12-06 (-177d) | 2027-06-02 → 2026-12-08 (-176d) |  |  | 126d → -57.88d | A56980, A10270 → A56980 |
| PAV | **Pavement Markings** | 2027-06-03 → 2027-03-10 (-85d) | 2027-06-05 → 2027-03-13 (-84d) |  |  |  |  |
| A57000 | Retroreflective Thermoplastic White Traffic lines | 2027-06-03 → 2027-03-10 (-85d) | 2027-06-03 → 2027-03-11 (-84d) |  |  | 126d → 198.3d |  |
| A57010 | Retroreflective Thermoplastic Yellow Traffic lines | 2027-06-05 → 2027-03-11 (-86d) | 2027-06-05 → 2027-03-13 (-84d) |  |  | 126d → 198.3d |  |
| TRS | **Traffic Signage** | 2027-06-06 → 2027-03-13 (-85d) | 2027-06-14 → 2027-03-22 (-84d) |  |  |  |  |
| A57020 | Traffic signs, ground mounted, 1 Sheet Alumenium, (breakaway) Single post | 2027-06-06 → 2027-03-13 (-85d) | 2027-06-06 → 2027-03-14 (-84d) |  |  | 126d → 198.3d |  |
| A57030 | Traffic signs, ground mounted, 2 Sheet Alumenium, (breakaway) Single post | 2027-06-07 → 2027-03-14 (-85d) | 2027-06-07 → 2027-03-15 (-84d) |  |  | 126d → 198.3d |  |
| A57040 | Traffic signs, ground mounted, Sheet Alumenium, (breakaway) Double post | 2027-06-08 → 2027-03-15 (-85d) | 2027-06-10 → 2027-03-18 (-84d) |  |  | 126d → 198.3d |  |

| ID | Task | Start | Finish | Duration | Complete | Total float | Predecessors |
| --- | --- | --- | --- | --- | --- | --- | --- |
| A57050 | Retroreflective raised pavement markers (Type A) | 2027-06-12 → 2027-03-18 (-86d) | 2027-06-12 → 2027-03-20 (-84d) |  |  | 127d → 199.3d |  |
| A57060 | Ceramic raised pavement markers | 2027-06-13 → 2027-03-20 (-85d) | 2027-06-13 → 2027-03-21 (-84d) |  |  | 127d → 199.3d |  |
| A57070 | Solar powered lighting cateyes pavement markers | 2027-06-14 → 2027-03-21 (-85d) | 2027-06-14 → 2027-03-22 (-84d) |  |  | 147d → 219.3d |  |
| 5 | **Road 5** | 2026-05-20 → 2026-08-29 (+101d) | 2027-06-09 → 2027-03-23 (-78d) |  |  |  |  |
| AGG | **Aggregate Base Course** | 2026-05-20 → 2026-08-29 (+101d) | 2026-05-26 → 2026-12-06 (+194d) |  |  |  |  |
| A57080 | Aggregate base course | 2026-05-20 → 2026-08-29 A (+101d) | 2026-05-26 → 2026-12-06 (+194d) |  | 0% → 30% | 0d → -102.8d |  |
| BIT | **Bituminous Construction** | 2026-05-27 → 2026-08-29 (+94d) | 2026-05-27 → 2026-12-09 (+196d) |  |  |  |  |
| A57090 | Bituminous base course (Grading I - Class A) | 2026-05-27 → 2026-08-29 A (+94d) | 2026-05-27 → 2026-12-09 (+196d) |  | 0% → 15% | 109d → -58.91d | A57080 → A57080, A57130 |
| ASP | **Asphalt Wearing Course** | 2027-04-27 → 2027-03-10 (-48d) | 2027-05-03 → 2027-03-11 (-53d) |  |  |  |  |
| A57100 | Bituminous concrete wearing course | 2027-04-27 → 2027-03-10 (-48d) | 2027-05-03 → 2027-03-11 (-53d) | 6d → 1d |  | 65d → 10.3d |  |
| CON | **Precast Concrete Curb** | 2027-05-26 → 2026-12-06 (-171d) | 2027-05-29 → 2026-12-09 (-171d) |  |  |  |  |
| A57110 | Concrete curb, Type (K1A) | 2027-05-26 → 2026-12-06 (-171d) | 2027-05-26 → 2026-12-07 (-170d) |  |  | 112d → -58.91d | A57080, A57100, A10270 → A57080 |
| A57120 | Concrete curb, Type (K1B) | 2027-05-27 → 2026-12-07 (-171d) | 2027-05-27 → 2026-12-08 (-170d) |  |  | 112d → -58.91d | A57110, A10270 → A57110 |
| A57130 | Concrete curb, Type (K2) | 2027-05-29 → 2026-12-08 (-172d) | 2027-05-29 → 2026-12-09 (-171d) |  |  | 112d → -58.91d | A57120, A10270 → A57120 |
| PAV | **Pavement Markings** | 2027-05-30 → 2027-03-11 (-80d) | 2027-05-31 → 2027-03-14 (-78d) |  |  |  |  |
| A57140 | Retroreflective Thermoplastic White Traffic lines | 2027-05-30 → 2027-03-11 (-80d) | 2027-05-30 → 2027-03-13 (-78d) |  |  | 112d → 179.3d |  |
| A57150 | Retroreflective Thermoplastic Yellow Traffic lines | 2027-05-31 → 2027-03-13 (-79d) | 2027-05-31 → 2027-03-14 (-78d) |  |  | 112d → 179.3d |  |
| TRS | **Traffic Signage** | 2027-06-01 → 2027-03-14 (-79d) | 2027-06-09 → 2027-03-23 (-78d) |  |  |  |  |
| A57160 | Traffic signs, ground mounted, 1 Sheet Alumenium, (breakaway) Single post | 2027-06-01 → 2027-03-14 (-79d) | 2027-06-01 → 2027-03-15 (-78d) |  |  | 112d → 179.3d |  |
| A57170 | Traffic signs, ground mounted, 2 Sheet Alumenium, (breakaway) Single post | 2027-06-02 → 2027-03-15 (-79d) | 2027-06-02 → 2027-03-16 (-78d) |  |  | 112d → 179.3d |  |
| A57180 | Traffic signs, ground mounted, Sheet Alumenium, (breakaway) Double post | 2027-06-03 → 2027-03-16 (-79d) | 2027-06-06 → 2027-03-20 (-78d) |  |  | 112d → 179.3d |  |
| A57190 | Retroreflective raised pavement markers (Type A) | 2027-06-07 → 2027-03-20 (-79d) | 2027-06-07 → 2027-03-21 (-78d) |  |  | 131d → 198.3d |  |
| A57200 | Ceramic raised pavement markers | 2027-06-08 → 2027-03-21 (-79d) | 2027-06-08 → 2027-03-22 (-78d) |  |  | 131d → 198.3d |  |
| A57210 | Solar powered lighting cateyes pavement markers | 2027-06-09 → 2027-03-22 (-79d) | 2027-06-09 → 2027-03-23 (-78d) |  |  | 151d → 218.3d |  |
| 6 | **Road 6** | 2026-05-27 → 2026-08-29 (+94d) | 2027-06-09 → 2027-03-24 (-77d) |  |  |  |  |
| AGG | **Aggregate Base Course** | 2026-05-27 → 2026-08-29 (+94d) | 2026-06-02 → 2026-12-09 (+190d) |  |  |  |  |
| A57220 | Aggregate base course | 2026-05-27 → 2026-08-29 A (+94d) | 2026-06-02 → 2026-12-09 (+190d) |  | 0% → 35% | 0d → -102.8d |  |
| BIT | **Bituminous Construction** | 2026-06-03 → 2026-08-29 (+87d) | 2026-06-08 → 2026-12-19 (+194d) |  |  |  |  |
| A57230 | Bituminous base course (Grading I - Class A) | 2026-06-03 → 2026-08-29 A (+87d) | 2026-06-08 → 2026-12-19 (+194d) |  | 0% → 10% | 99d → -66.46d | A57220 → A57220, A57270 |
| ASP | **Asphalt Wearing Course** | 2027-05-04 → 2027-03-11 (-54d) | 2027-05-10 → 2027-03-13 (-58d) |  |  |  |  |
| A57240 | Bituminous concrete wearing course | 2027-05-04 → 2027-03-11 (-54d) | 2027-05-10 → 2027-03-13 (-58d) | 6d → 1d |  | 65d → 10.3d |  |
| CON | **Precast Concrete Curb** | 2027-05-26 → 2026-12-09 (-168d) | 2027-05-29 → 2026-12-13 (-167d) |  |  |  |  |
| A57250 | Concrete curb, Type (K1A) | 2027-05-26 → 2026-12-09 (-168d) | 2027-05-26 → 2026-12-10 (-167d) |  |  | 112d → -66.46d | A57220, A57240, A10270 → A57220 |
| A57260 | Concrete curb, Type (K1B) | 2027-05-27 → 2026-12-10 (-168d) | 2027-05-27 → 2026-12-12 (-166d) |  |  | 112d → -66.46d | A57250, A10270 → A57250 |
| A57270 | Concrete curb, Type (K2) | 2027-05-29 → 2026-12-12 (-168d) | 2027-05-29 → 2026-12-13 (-167d) |  |  | 112d → -66.46d | A57260, A10270 → A57260 |
| PAV | **Pavement Markings** | 2027-05-30 → 2027-03-13 (-78d) | 2027-05-31 → 2027-03-15 (-77d) |  |  |  |  |
| A57280 | Retroreflective Thermoplastic White Traffic lines | 2027-05-30 → 2027-03-13 (-78d) | 2027-05-30 → 2027-03-14 (-77d) |  |  | 112d → 178.3d |  |
| A57290 | Retroreflective Thermoplastic Yellow Traffic lines | 2027-05-31 → 2027-03-14 (-78d) | 2027-05-31 → 2027-03-15 (-77d) |  |  | 112d → 178.3d |  |
| TRS | **Traffic Signage** | 2027-06-01 → 2027-03-15 (-78d) | 2027-06-09 → 2027-03-24 (-77d) |  |  |  |  |
| A57300 | Traffic signs, ground mounted, 1 Sheet Alumenium, (breakaway) Single post | 2027-06-01 → 2027-03-15 (-78d) | 2027-06-01 → 2027-03-16 (-77d) |  |  | 112d → 178.3d |  |
| A57310 | Traffic signs, ground mounted, 2 Sheet Alumenium, (breakaway) Single post | 2027-06-02 → 2027-03-16 (-78d) | 2027-06-02 → 2027-03-17 (-77d) |  |  | 112d → 178.3d |  |
| A57320 | Traffic signs, ground mounted, Sheet Alumenium, (breakaway) Double post | 2027-06-03 → 2027-03-17 (-78d) | 2027-06-06 → 2027-03-21 (-77d) |  |  | 112d → 178.3d |  |
| A57330 | Retroreflective raised pavement markers (Type A) | 2027-06-07 → 2027-03-21 (-78d) | 2027-06-07 → 2027-03-22 (-77d) |  |  | 131d → 197.3d |  |
| A57340 | Ceramic raised pavement markers | 2027-06-08 → 2027-03-22 (-78d) | 2027-06-08 → 2027-03-23 (-77d) |  |  | 131d → 197.3d |  |
| A57350 | Solar powered lighting cateyes pavement markers | 2027-06-09 → 2027-03-23 (-78d) | 2027-06-09 → 2027-03-24 (-77d) |  |  | 151d → 217.3d |  |
| 7 | **Road 7** | 2026-06-03 → 2026-08-29 (+87d) | 2027-06-09 → 2027-03-25 (-76d) |  |  |  |  |
| AGG | **Aggregate Base Course** | 2026-06-03 → 2026-08-29 (+87d) | 2026-06-09 → 2026-12-10 (+184d) |  |  |  |  |
| A57360 | Aggregate base course | 2026-06-03 → 2026-08-29 A (+87d) | 2026-06-09 → 2026-12-10 (+184d) |  | 0% → 98% | 0d → -102.8d |  |
| BIT | **Bituminous Construction** | 2026-06-10 → 2026-08-29 (+80d) | 2026-06-15 → 2026-12-14 (+182d) |  |  |  |  |
| A57370 | Bituminous base course (Grading I - Class A) | 2026-06-10 → 2026-08-29 A (+80d) | 2026-06-15 → 2026-12-14 (+182d) |  | 0% → 95% | 93d → -62.33d | A57360 → A57360, A57410 |
| ASP | **Asphalt Wearing Course** | 2027-05-11 → 2027-03-13 (-59d) | 2027-05-17 → 2027-03-14 (-64d) |  |  |  |  |
| A57380 | Bituminous concrete wearing course | 2027-05-11 → 2027-03-13 (-59d) | 2027-05-17 → 2027-03-14 (-64d) | 6d → 1d |  | 65d → 10.3d |  |
| CON | **Precast Concrete Curb** | 2027-05-26 → 2026-12-10 (-167d) | 2027-05-29 → 2026-12-14 (-166d) |  |  |  |  |
| A57390 | Concrete curb, Type (K1A) | 2027-05-26 → 2026-12-10 (-167d) | 2027-05-26 → 2026-12-12 (-165d) |  |  | 112d → -62.33d | A57360, A57380, A10270 → A57360 |
| A57400 | Concrete curb, Type (K1B) | 2027-05-27 → 2026-12-12 (-166d) | 2027-05-27 → 2026-12-13 (-165d) |  |  | 112d → -62.33d | A57390, A10270 → A57390 |
| A57410 | Concrete curb, Type (K2) | 2027-05-29 → 2026-12-13 (-167d) | 2027-05-29 → 2026-12-14 (-166d) |  |  | 112d → -62.33d | A57400, A10270 → A57400 |
| PAV | **Pavement Markings** | 2027-05-30 → 2027-03-14 (-77d) | 2027-05-31 → 2027-03-16 (-76d) |  |  |  |  |
| A57420 | Retroreflective Thermoplastic White Traffic lines | 2027-05-30 → 2027-03-14 (-77d) | 2027-05-30 → 2027-03-15 (-76d) |  |  | 112d → 177.3d |  |
| A57430 | Retroreflective Thermoplastic Yellow Traffic lines | 2027-05-31 → 2027-03-15 (-77d) | 2027-05-31 → 2027-03-16 (-76d) |  |  | 112d → 177.3d |  |
| TRS | **Traffic Signage** | 2027-06-01 → 2027-03-16 (-77d) | 2027-06-09 → 2027-03-25 (-76d) |  |  |  |  |
| A57440 | Traffic signs, ground mounted, 1 Sheet Alumenium, (breakaway) Single post | 2027-06-01 → 2027-03-16 (-77d) | 2027-06-01 → 2027-03-17 (-76d) |  |  | 112d → 177.3d |  |
| A57450 | Traffic signs, ground mounted, 2 Sheet Alumenium, (breakaway) Single post | 2027-06-02 → 2027-03-17 (-77d) | 2027-06-02 → 2027-03-18 (-76d) |  |  | 112d → 177.3d |  |
| A57460 | Traffic signs, ground mounted, Sheet Alumenium, (breakaway) Double post | 2027-06-03 → 2027-03-18 (-77d) | 2027-06-06 → 2027-03-22 (-76d) |  |  | 112d → 177.3d |  |
| A57470 | Retroreflective raised pavement markers (Type A) | 2027-06-07 → 2027-03-22 (-77d) | 2027-06-07 → 2027-03-23 (-76d) |  |  | 131d → 196.3d |  |
| A57480 | Ceramic raised pavement markers | 2027-06-08 → 2027-03-23 (-77d) | 2027-06-08 → 2027-03-24 (-76d) |  |  | 131d → 196.3d |  |
| A57490 | Solar powered lighting cateyes pavement markers | 2027-06-09 → 2027-03-24 (-77d) | 2027-06-09 → 2027-03-25 (-76d) |  |  | 151d → 216.3d |  |
| 8 | **Road 8** | 2026-06-10 → 2026-08-15 (+66d) | 2027-06-09 → 2027-03-27 (-74d) |  |  |  |  |
| AGG | **Aggregate Base Course** | 2026-06-10 → 2026-08-15 (+66d) | 2026-06-16 → 2026-09-20 (+96d) |  |  |  |  |
| A57500 | Aggregate base course | 2026-06-10 → 2026-08-15 A (+66d) | 2026-06-16 → 2026-09-20 A (+96d) |  | 0% → 100% | 0d → none |  |
| BIT | **Bituminous Construction** | 2026-06-17 → 2026-08-15 (+59d) | 2026-06-22 → 2026-09-20 (+90d) |  |  |  |  |

| ID | Task | Start | Finish | Duration | Complete | Total float | Predecessors |
| --- | --- | --- | --- | --- | --- | --- | --- |
| A57510 | Bituminous base course (Grading I - Class A) | 2026-06-17 → 2026-08-15 A (+59d) | 2026-06-22 → 2026-09-20 A (+90d) |  | 0% → 100% | 87d → none | A57500 → A57500, A57550 |
| ASP | **Asphalt Wearing Course** | 2027-05-18 → 2027-03-14 (-65d) | 2027-05-24 → 2027-03-15 (-70d) |  |  |  |  |
| A57520 | Bituminous concrete wearing course | 2027-05-18 → 2027-03-14 (-65d) | 2027-05-24 → 2027-03-15 (-70d) | 6d → 1d |  | 65d → 10.3d |  |
| CON | **Precast Concrete Curb** | 2027-05-26 → 2026-12-10 (-167d) | 2027-05-29 → 2026-12-14 (-166d) |  |  |  |  |
| A57530 | Concrete curb, Type (K1A) | 2027-05-26 → 2026-12-10 (-167d) | 2027-05-26 → 2026-12-12 (-165d) |  |  | 112d → -62.08d | A57500, A57520, A10270 → A57500 |
| A57540 | Concrete curb, Type (K1B) | 2027-05-27 → 2026-12-12 (-166d) | 2027-05-27 → 2026-12-13 (-165d) |  |  | 112d → -62.08d | A57530, A10270 → A57530 |
| A57550 | Concrete curb, Type (K2) | 2027-05-29 → 2026-12-13 (-167d) | 2027-05-29 → 2026-12-14 (-166d) |  |  | 112d → -62.08d | A57540, A10270 → A57540 |
| PAV | **Pavement Markings** | 2027-05-30 → 2027-03-15 (-76d) | 2027-05-31 → 2027-03-17 (-75d) |  |  |  |  |
| A57560 | Retroreflective Thermoplastic White Traffic lines | 2027-05-30 → 2027-03-15 (-76d) | 2027-05-30 → 2027-03-16 (-75d) |  |  | 112d → 176.3d |  |
| A57570 | Retroreflective Thermoplastic Yellow Traffic lines | 2027-05-31 → 2027-03-16 (-76d) | 2027-05-31 → 2027-03-17 (-75d) |  |  | 112d → 176.3d |  |
| TRS | **Traffic Signage** | 2027-06-01 → 2027-03-17 (-76d) | 2027-06-09 → 2027-03-27 (-74d) |  |  |  |  |
| A57580 | Traffic signs, ground mounted, 1 Sheet Alumenium, (breakaway) Single post | 2027-06-01 → 2027-03-17 (-76d) | 2027-06-01 → 2027-03-18 (-75d) |  |  | 112d → 176.3d |  |
| A57590 | Traffic signs, ground mounted, 2 Sheet Alumenium, (breakaway) Single post | 2027-06-02 → 2027-03-18 (-76d) | 2027-06-02 → 2027-03-20 (-74d) |  |  | 112d → 176.3d |  |
| A57600 | Traffic signs, ground mounted, Sheet Alumenium, (breakaway) Double post | 2027-06-03 → 2027-03-20 (-75d) | 2027-06-06 → 2027-03-23 (-75d) |  |  | 112d → 176.3d |  |
| A57610 | Retroreflective raised pavement markers (Type A) | 2027-06-07 → 2027-03-23 (-76d) | 2027-06-07 → 2027-03-24 (-75d) |  |  | 131d → 195.3d |  |
| A57620 | Ceramic raised pavement markers | 2027-06-08 → 2027-03-24 (-76d) | 2027-06-08 → 2027-03-25 (-75d) |  |  | 131d → 195.3d |  |
| A57630 | Solar powered lighting cateyes pavement markers | 2027-06-09 → 2027-03-25 (-76d) | 2027-06-09 → 2027-03-27 (-74d) |  |  | 151d → 215.3d |  |
| 9 | **Road 9** | 2026-06-17 → 2026-08-15 (+59d) | 2027-06-15 → 2027-03-28 (-79d) |  |  |  |  |
| AGG | **Aggregate Base Course** | 2026-06-17 → 2026-08-15 (+59d) | 2026-06-23 → 2026-09-20 (+89d) |  |  |  |  |
| A57640 | Aggregate base course | 2026-06-17 → 2026-08-15 A (+59d) | 2026-06-23 → 2026-09-20 A (+89d) |  | 0% → 100% | 0d → none |  |
| BIT | **Bituminous Construction** | 2026-06-24 → 2026-08-29 (+66d) | 2026-06-29 → 2026-12-14 (+168d) |  |  |  |  |
| A57650 | Bituminous base course (Grading I - Class A) | 2026-06-24 → 2026-08-29 A (+66d) | 2026-06-29 → 2026-12-14 (+168d) |  | 0% → 98% | 81d → -62.18d | A57640 → A57640, A57690 |
| ASP | **Asphalt Wearing Course** | 2027-05-25 → 2027-03-15 (-71d) | 2027-05-31 → 2027-03-16 (-76d) |  |  |  |  |
| A57660 | Bituminous concrete wearing course | 2027-05-25 → 2027-03-15 (-71d) | 2027-05-31 → 2027-03-16 (-76d) | 6d → 1d |  | 65d → 10.3d |  |
| CON | **Precast Concrete Curb** | 2027-06-01 → 2026-12-10 (-173d) | 2027-06-03 → 2026-12-14 (-171d) |  |  |  |  |
| A57670 | Concrete curb, Type (K1A) | 2027-06-01 → 2026-12-10 (-173d) | 2027-06-01 → 2026-12-12 (-171d) |  |  | 107d → -62.18d | A57640, A57660, A10270 → A57640 |
| A57680 | Concrete curb, Type (K1B) | 2027-06-02 → 2026-12-12 (-172d) | 2027-06-02 → 2026-12-13 (-171d) |  |  | 107d → -62.18d | A57670, A10270 → A57670 |
| A57690 | Concrete curb, Type (K2) | 2027-06-03 → 2026-12-13 (-172d) | 2027-06-03 → 2026-12-14 (-171d) |  |  | 107d → -62.18d | A57680, A10270 → A57680 |
| PAV | **Pavement Markings** | 2027-06-05 → 2027-03-16 (-81d) | 2027-06-06 → 2027-03-18 (-80d) |  |  |  |  |
| A57700 | Retroreflective Thermoplastic White Traffic lines | 2027-06-05 → 2027-03-16 (-81d) | 2027-06-05 → 2027-03-17 (-80d) |  |  | 107d → 175.3d |  |
| A57710 | Retroreflective Thermoplastic Yellow Traffic lines | 2027-06-06 → 2027-03-17 (-81d) | 2027-06-06 → 2027-03-18 (-80d) |  |  | 107d → 175.3d |  |
| TRS | **Traffic Signage** | 2027-06-07 → 2027-03-18 (-81d) | 2027-06-15 → 2027-03-28 (-79d) |  |  |  |  |
| A57720 | Traffic signs, ground mounted, 1 Sheet Alumenium, (breakaway) Single post | 2027-06-07 → 2027-03-18 (-81d) | 2027-06-07 → 2027-03-20 (-79d) |  |  | 107d → 175.3d |  |
| A57730 | Traffic signs, ground mounted, 2 Sheet Alumenium, (breakaway) Single post | 2027-06-08 → 2027-03-20 (-80d) | 2027-06-08 → 2027-03-21 (-79d) |  |  | 107d → 175.3d |  |
| A57740 | Traffic signs, ground mounted, Sheet Alumenium, (breakaway) Double post | 2027-06-09 → 2027-03-21 (-80d) | 2027-06-12 → 2027-03-24 (-80d) |  |  | 107d → 175.3d |  |
| A57750 | Retroreflective raised pavement markers (Type A) | 2027-06-13 → 2027-03-24 (-81d) | 2027-06-13 → 2027-03-25 (-80d) |  |  | 126d → 194.3d |  |
| A57760 | Ceramic raised pavement markers | 2027-06-14 → 2027-03-25 (-81d) | 2027-06-14 → 2027-03-27 (-79d) |  |  | 126d → 194.3d |  |
| A57770 | Solar powered lighting cateyes pavement markers | 2027-06-15 → 2027-03-27 (-80d) | 2027-06-15 → 2027-03-28 (-79d) |  |  | 146d → 214.3d |  |
| 10 | **Road 10** | 2026-06-24 → 2026-08-29 (+66d) | 2027-06-16 → 2027-03-29 (-79d) |  |  |  |  |
| AGG | **Aggregate Base Course** | 2026-06-24 → 2026-08-29 (+66d) | 2026-06-30 → 2026-12-10 (+163d) |  |  |  |  |
| A57780 | Aggregate base course | 2026-06-24 → 2026-08-29 A (+66d) | 2026-06-30 → 2026-12-10 (+163d) |  | 0% → 98% | 0d → -102.8d |  |
| BIT | **Bituminous Construction** | 2026-07-01 → 2026-08-29 (+59d) | 2026-07-06 → 2026-12-16 (+163d) |  |  |  |  |
| A57790 | Bituminous base course (Grading I - Class A) | 2026-07-01 → 2026-08-29 A (+59d) | 2026-07-06 → 2026-12-16 (+163d) |  | 0% → 50% | 75d → -64.7d | A57780 → A57780, A57830 |
| ASP | **Asphalt Wearing Course** | 2027-06-01 → 2027-03-16 (-77d) | 2027-06-03 → 2027-03-17 (-78d) |  |  |  |  |
| A57800 | Bituminous concrete wearing course | 2027-06-01 → 2027-03-16 (-77d) | 2027-06-03 → 2027-03-17 (-78d) | 3d → 1d |  | 65d → 10.3d |  |
| CON | **Precast Concrete Curb** | 2027-05-26 → 2026-12-10 (-167d) | 2027-06-05 → 2026-12-14 (-173d) |  |  |  |  |
| A57810 | Concrete curb, Type (K1A) | 2027-05-26 → 2026-12-10 (-167d) | 2027-05-26 → 2026-12-12 (-165d) |  |  | 112d → -64.7d | A57780, A10270 → A57780 |
| A57820 | Concrete curb, Type (K1B) | 2027-05-27 → 2026-12-12 (-166d) | 2027-05-27 → 2026-12-13 (-165d) |  |  | 112d → -64.7d | A57810, A10270 → A57810 |
| A57830 | Concrete curb, Type (K2) | 2027-06-05 → 2026-12-13 (-174d) | 2027-06-05 → 2026-12-14 (-173d) |  |  | 106d → -64.7d | A57820, A57800, A10270 → A57820 |
| PAV | **Pavement Markings** | 2027-06-06 → 2027-03-17 (-81d) | 2027-06-07 → 2027-03-20 (-79d) |  |  |  |  |
| A57840 | Retroreflective Thermoplastic White Traffic lines | 2027-06-06 → 2027-03-17 (-81d) | 2027-06-06 → 2027-03-18 (-80d) |  |  | 106d → 174.3d |  |
| A57850 | Retroreflective Thermoplastic Yellow Traffic lines | 2027-06-07 → 2027-03-18 (-81d) | 2027-06-07 → 2027-03-20 (-79d) |  |  | 106d → 174.3d |  |
| TRS | **Traffic Signage** | 2027-06-08 → 2027-03-20 (-80d) | 2027-06-16 → 2027-03-29 (-79d) |  |  |  |  |
| A57860 | Traffic signs, ground mounted, 1 Sheet Alumenium, (breakaway) Single post | 2027-06-08 → 2027-03-20 (-80d) | 2027-06-08 → 2027-03-21 (-79d) |  |  | 106d → 174.3d |  |
| A57870 | Traffic signs, ground mounted, 2 Sheet Alumenium, (breakaway) Single post | 2027-06-09 → 2027-03-21 (-80d) | 2027-06-09 → 2027-03-22 (-79d) |  |  | 106d → 174.3d |  |
| A57880 | Traffic signs, ground mounted, Sheet Alumenium, (breakaway) Double post | 2027-06-10 → 2027-03-22 (-80d) | 2027-06-13 → 2027-03-25 (-80d) |  |  | 106d → 174.3d |  |
| A57890 | Retroreflective raised pavement markers (Type A) | 2027-06-14 → 2027-03-25 (-81d) | 2027-06-14 → 2027-03-27 (-79d) |  |  | 125d → 193.3d |  |
| A57900 | Ceramic raised pavement markers | 2027-06-15 → 2027-03-27 (-80d) | 2027-06-15 → 2027-03-28 (-79d) |  |  | 125d → 193.3d |  |
| A57910 | Solar powered lighting cateyes pavement markers | 2027-06-16 → 2027-03-28 (-80d) | 2027-06-16 → 2027-03-29 (-79d) |  |  | 145d → 213.3d |  |
| 11 | **Road 11** | 2026-07-01 → 2026-08-29 (+59d) | 2027-06-22 → 2027-03-30 (-84d) |  |  |  |  |
| AGG | **Aggregate Base Course** | 2026-07-01 → 2026-08-29 (+59d) | 2026-07-07 → 2026-12-10 (+156d) |  |  |  |  |
| A57920 | Aggregate base course | 2026-07-01 → 2026-08-29 A (+59d) | 2026-07-07 → 2026-12-10 (+156d) |  | 0% → 99% | 1d → -78.02d |  |
| BIT | **Bituminous Construction** | 2026-07-08 → 2026-08-29 (+52d) | 2026-07-13 → 2026-12-14 (+154d) |  |  |  |  |
| A57930 | Bituminous base course (Grading I - Class A) | 2026-07-08 → 2026-08-29 A (+52d) | 2026-07-13 → 2026-12-14 (+154d) |  | 0% → 99% | 69d → -62.31d | A57920 → A57920, A57970 |
| ASP | **Asphalt Wearing Course** | 2027-06-05 → 2027-03-17 (-80d) | 2027-06-07 → 2027-03-18 (-81d) |  |  |  |  |
| A57940 | Bituminous concrete wearing course | 2027-06-05 → 2027-03-17 (-80d) | 2027-06-07 → 2027-03-18 (-81d) | 3d → 1d |  | 65d → 10.3d |  |
| CON | **Precast Concrete Curb** | 2027-06-08 → 2026-12-10 (-180d) | 2027-06-10 → 2026-12-14 (-178d) |  |  |  |  |
| A57950 | Concrete curb, Type (K1A) | 2027-06-08 → 2026-12-10 (-180d) | 2027-06-08 → 2026-12-12 (-178d) |  |  | 101d → -62.31d | A57920, A57940, A10270 → A57920 |
| A57960 | Concrete curb, Type (K1B) | 2027-06-09 → 2026-12-12 (-179d) | 2027-06-09 → 2026-12-13 (-178d) |  |  | 101d → -62.31d | A57950, A10270 → A57950 |
| A57970 | Concrete curb, Type (K2) | 2027-06-10 → 2026-12-13 (-179d) | 2027-06-10 → 2026-12-14 (-178d) |  |  | 101d → -62.31d | A57960, A10270 → A57960 |

| ID | Task | Start | Finish | Duration | Complete | Total float | Predecessors |
| --- | --- | --- | --- | --- | --- | --- | --- |
| PAV | **Pavement Markings** | 2027-06-12 → 2027-03-18 (-86d) | 2027-06-13 → 2027-03-21 (-84d) |  |  |  |  |
| A57980 | Retroreflective Thermoplastic White Traffic lines | 2027-06-12 → 2027-03-18 (-86d) | 2027-06-12 → 2027-03-20 (-84d) |  |  | 101d → 173.3d |  |
| A57990 | Retroreflective Thermoplastic Yellow Traffic lines | 2027-06-13 → 2027-03-20 (-85d) | 2027-06-13 → 2027-03-21 (-84d) |  |  | 101d → 173.3d |  |
| TRS | **Traffic Signage** | 2027-06-14 → 2027-03-21 (-85d) | 2027-06-22 → 2027-03-30 (-84d) |  |  |  |  |
| A58000 | Traffic signs, ground mounted, 1 Sheet Alumenium, (breakaway) Single post | 2027-06-14 → 2027-03-21 (-85d) | 2027-06-14 → 2027-03-22 (-84d) |  |  | 101d → 173.3d |  |
| A58010 | Traffic signs, ground mounted, 2 Sheet Alumenium, (breakaway) Single post | 2027-06-15 → 2027-03-22 (-85d) | 2027-06-15 → 2027-03-23 (-84d) |  |  | 101d → 173.3d |  |
| A58020 | Traffic signs, ground mounted, Sheet Alumenium, (breakaway) Double post | 2027-06-16 → 2027-03-23 (-85d) | 2027-06-19 → 2027-03-27 (-84d) |  |  | 101d → 173.3d |  |
| A58030 | Retroreflective raised pavement markers (Type A) | 2027-06-20 → 2027-03-27 (-85d) | 2027-06-20 → 2027-03-28 (-84d) |  |  | 120d → 192.3d |  |
| A58040 | Ceramic raised pavement markers | 2027-06-21 → 2027-03-28 (-85d) | 2027-06-21 → 2027-03-29 (-84d) |  |  | 120d → 192.3d |  |
| A58050 | Solar powered lighting cateyes pavement markers | 2027-06-22 → 2027-03-29 (-85d) | 2027-06-22 → 2027-03-30 (-84d) |  |  | 140d → 212.3d |  |
| 12 | **Road 12** | 2026-07-01 → 2026-08-29 (+59d) | 2027-06-26 → 2027-03-31 (-87d) |  |  |  |  |
| AGG | **Aggregate Base Course** | 2026-07-01 → 2026-08-29 (+59d) | 2026-07-07 → 2026-12-10 (+156d) |  |  |  |  |
| A58060 | Aggregate base course | 2026-07-01 → 2026-08-29 A (+59d) | 2026-07-07 → 2026-12-10 (+156d) |  | 0% → 98% | 1d → -78.02d |  |
| BIT | **Bituminous Construction** | 2026-07-08 → 2026-08-29 (+52d) | 2026-07-13 → 2026-12-15 (+155d) |  |  |  |  |
| A58070 | Bituminous base course (Grading I - Class A) | 2026-07-08 → 2026-08-29 A (+52d) | 2026-07-13 → 2026-12-15 (+155d) |  | 0% → 75% | 69d → -63.57d | A58060 → A58060, A58110 |
| ASP | **Asphalt Wearing Course** | 2027-06-08 → 2027-03-18 (-82d) | 2027-06-10 → 2027-03-20 (-82d) |  |  |  |  |
| A58080 | Bituminous concrete wearing course | 2027-06-08 → 2027-03-18 (-82d) | 2027-06-10 → 2027-03-20 (-82d) | 3d → 1d |  | 65d → 10.3d |  |
| CON | **Precast Concrete Curb** | 2027-06-12 → 2026-12-10 (-184d) | 2027-06-14 → 2026-12-14 (-182d) |  |  |  |  |
| A58090 | Concrete curb, Type (K1A) | 2027-06-12 → 2026-12-10 (-184d) | 2027-06-12 → 2026-12-12 (-182d) |  |  | 98d → -63.57d | A58060, A58080, A10270 → A58060 |
| A58100 | Concrete curb, Type (K1B) | 2027-06-13 → 2026-12-12 (-183d) | 2027-06-13 → 2026-12-13 (-182d) |  |  | 98d → -63.57d | A58090, A10270 → A58090 |
| A58110 | Concrete curb, Type (K2) | 2027-06-14 → 2026-12-13 (-183d) | 2027-06-14 → 2026-12-14 (-182d) |  |  | 98d → -63.57d | A58100, A10270 → A58100 |
| PAV | **Pavement Markings** | 2027-06-15 → 2027-03-20 (-87d) | 2027-06-16 → 2027-03-22 (-86d) |  |  |  |  |
| A58120 | Retroreflective Thermoplastic White Traffic lines | 2027-06-15 → 2027-03-20 (-87d) | 2027-06-15 → 2027-03-21 (-86d) |  |  | 98d → 172.3d |  |
| A58130 | Retroreflective Thermoplastic Yellow Traffic lines | 2027-06-16 → 2027-03-21 (-87d) | 2027-06-16 → 2027-03-22 (-86d) |  |  | 98d → 172.3d |  |
| TRS | **Traffic Signage** | 2027-06-17 → 2027-03-22 (-87d) | 2027-06-26 → 2027-03-31 (-87d) |  |  |  |  |
| A58140 | Traffic signs, ground mounted, 1 Sheet Alumenium, (breakaway) Single post | 2027-06-17 → 2027-03-22 (-87d) | 2027-06-17 → 2027-03-23 (-86d) |  |  | 98d → 172.3d |  |
| A58150 | Traffic signs, ground mounted, 2 Sheet Alumenium, (breakaway) Single post | 2027-06-19 → 2027-03-23 (-88d) | 2027-06-19 → 2027-03-24 (-87d) |  |  | 98d → 172.3d |  |
| A58160 | Traffic signs, ground mounted, Sheet Alumenium, (breakaway) Double post | 2027-06-20 → 2027-03-24 (-88d) | 2027-06-22 → 2027-03-28 (-86d) |  |  | 98d → 172.3d |  |
| A58170 | Retroreflective raised pavement markers (Type A) | 2027-06-23 → 2027-03-28 (-87d) | 2027-06-23 → 2027-03-29 (-86d) |  |  | 117d → 191.3d |  |
| A58180 | Ceramic raised pavement markers | 2027-06-24 → 2027-03-29 (-87d) | 2027-06-24 → 2027-03-30 (-86d) |  |  | 117d → 191.3d |  |
| A58190 | Solar powered lighting cateyes pavement markers | 2027-06-26 → 2027-03-30 (-88d) | 2027-06-26 → 2027-03-31 (-87d) |  |  | 137d → 211.3d |  |
| 13 | **Road 13** | 2026-07-08 → 2026-08-15 (+38d) | 2027-06-29 → 2027-04-01 (-89d) |  |  |  |  |
| AGG | **Aggregate Base Course** | 2026-07-08 → 2026-08-15 (+38d) | 2026-07-14 → 2026-09-20 (+68d) |  |  |  |  |
| A58200 | Aggregate base course | 2026-07-08 → 2026-08-15 A (+38d) | 2026-07-14 → 2026-09-20 A (+68d) |  | 0% → 100% | 1d → none |  |
| BIT | **Bituminous Construction** | 2026-07-15 → 2026-08-15 (+31d) | 2026-07-20 → 2026-09-20 (+62d) |  |  |  |  |
| A58210 | Bituminous base course (Grading I - Class A) | 2026-07-15 → 2026-08-15 A (+31d) | 2026-07-20 → 2026-09-20 A (+62d) |  | 0% → 100% | 63d → none | A58200 → A58200, A58250 |
| ASP | **Asphalt Wearing Course** | 2027-06-12 → 2027-03-20 (-84d) | 2027-06-14 → 2027-03-21 (-85d) |  |  |  |  |
| A58220 | Bituminous concrete wearing course | 2027-06-12 → 2027-03-20 (-84d) | 2027-06-14 → 2027-03-21 (-85d) | 3d → 1d |  | 65d → 10.3d |  |
| CON | **Precast Concrete Curb** | 2027-06-15 → 2026-12-10 (-187d) | 2027-06-17 → 2026-12-14 (-185d) |  |  |  |  |
| A58230 | Concrete curb, Type (K1A) | 2027-06-15 → 2026-12-10 (-187d) | 2027-06-15 → 2026-12-12 (-185d) |  |  | 95d → -62.32d | A58200, A58220, A10270 → A58200 |
| A58240 | Concrete curb, Type (K1B) | 2027-06-16 → 2026-12-12 (-186d) | 2027-06-16 → 2026-12-13 (-185d) |  |  | 95d → -62.32d | A58230, A10270 → A58230 |
| A58250 | Concrete curb, Type (K2) | 2027-06-17 → 2026-12-13 (-186d) | 2027-06-17 → 2026-12-14 (-185d) |  |  | 95d → -62.32d | A58240, A10270 → A58240 |
| PAV | **Pavement Markings** | 2027-06-19 → 2027-03-21 (-90d) | 2027-06-20 → 2027-03-23 (-89d) |  |  |  |  |
| A58260 | Retroreflective Thermoplastic White Traffic lines | 2027-06-19 → 2027-03-21 (-90d) | 2027-06-19 → 2027-03-22 (-89d) |  |  | 95d → 171.3d |  |
| A58270 | Retroreflective Thermoplastic Yellow Traffic lines | 2027-06-20 → 2027-03-22 (-90d) | 2027-06-20 → 2027-03-23 (-89d) |  |  | 95d → 171.3d |  |
| TRS | **Traffic Signage** | 2027-06-21 → 2027-03-23 (-90d) | 2027-06-29 → 2027-04-01 (-89d) |  |  |  |  |
| A58280 | Traffic signs, ground mounted, 1 Sheet Alumenium, (breakaway) Single post | 2027-06-21 → 2027-03-23 (-90d) | 2027-06-21 → 2027-03-24 (-89d) |  |  | 95d → 171.3d |  |
| A58290 | Traffic signs, ground mounted, 2 Sheet Alumenium, (breakaway) Single post | 2027-06-22 → 2027-03-24 (-90d) | 2027-06-22 → 2027-03-25 (-89d) |  |  | 95d → 171.3d |  |
| A58300 | Traffic signs, ground mounted, Sheet Alumenium, (breakaway) Double post | 2027-06-23 → 2027-03-25 (-90d) | 2027-06-26 → 2027-03-29 (-89d) |  |  | 95d → 171.3d |  |
| A58310 | Retroreflective raised pavement markers (Type A) | 2027-06-27 → 2027-03-29 (-90d) | 2027-06-27 → 2027-03-30 (-89d) |  |  | 114d → 190.3d |  |
| A58320 | Ceramic raised pavement markers | 2027-06-28 → 2027-03-30 (-90d) | 2027-06-28 → 2027-03-31 (-89d) |  |  | 114d → 190.3d |  |
| A58330 | Solar powered lighting cateyes pavement markers | 2027-06-29 → 2027-03-31 (-90d) | 2027-06-29 → 2027-04-01 (-89d) |  |  | 134d → 210.3d |  |
| 14 | **Road 14** | 2026-07-15 → 2026-08-15 (+31d) | 2027-07-03 → 2027-04-03 (-91d) |  |  |  |  |
| AGG | **Aggregate Base Course** | 2026-07-15 → 2026-08-15 (+31d) | 2026-07-21 → 2026-09-20 (+61d) |  |  |  |  |
| A58340 | Aggregate base course | 2026-07-15 → 2026-08-15 A (+31d) | 2026-07-21 → 2026-09-20 A (+61d) |  | 0% → 100% | 1d → none |  |
| BIT | **Bituminous Construction** | 2026-07-22 → 2026-08-15 (+24d) | 2026-07-27 → 2026-09-20 (+55d) |  |  |  |  |
| A58350 | Bituminous base course (Grading I - Class A) | 2026-07-22 → 2026-08-15 A (+24d) | 2026-07-27 → 2026-09-20 A (+55d) |  | 0% → 100% | 57d → none | A58340 → A58340, A58390 |
| ASP | **Asphalt Wearing Course** | 2027-06-15 → 2027-03-21 (-86d) | 2027-06-17 → 2027-03-22 (-87d) |  |  |  |  |
| A58360 | Bituminous concrete wearing course | 2027-06-15 → 2027-03-21 (-86d) | 2027-06-17 → 2027-03-22 (-87d) | 3d → 1d |  | 65d → 10.3d |  |
| CON | **Precast Concrete Curb** | 2027-06-19 → 2026-12-10 (-191d) | 2027-06-21 → 2026-12-14 (-189d) |  |  |  |  |
| A58370 | Concrete curb, Type (K1A) | 2027-06-19 → 2026-12-10 (-191d) | 2027-06-19 → 2026-12-12 (-189d) |  |  | 92d → -62.32d | A58340, A58360, A10270 → A58340 |
| A58380 | Concrete curb, Type (K1B) | 2027-06-20 → 2026-12-12 (-190d) | 2027-06-20 → 2026-12-13 (-189d) |  |  | 92d → -62.32d | A58370, A10270 → A58370 |
| A58390 | Concrete curb, Type (K2) | 2027-06-21 → 2026-12-13 (-190d) | 2027-06-21 → 2026-12-14 (-189d) |  |  | 92d → -62.32d | A58380, A10270 → A58380 |
| PAV | **Pavement Markings** | 2027-06-22 → 2027-03-22 (-92d) | 2027-06-23 → 2027-03-24 (-91d) |  |  |  |  |
| A58400 | Retroreflective Thermoplastic White Traffic lines | 2027-06-22 → 2027-03-22 (-92d) | 2027-06-22 → 2027-03-23 (-91d) |  |  | 92d → 170.3d |  |
| A58410 | Retroreflective Thermoplastic Yellow Traffic lines | 2027-06-23 → 2027-03-23 (-92d) | 2027-06-23 → 2027-03-24 (-91d) |  |  | 92d → 170.3d |  |
| TRS | **Traffic Signage** | 2027-06-24 → 2027-03-24 (-92d) | 2027-07-03 → 2027-04-03 (-91d) |  |  |  |  |
| A58420 | Traffic signs, ground mounted, 1 Sheet Alumenium, (breakaway) Single post | 2027-06-24 → 2027-03-24 (-92d) | 2027-06-24 → 2027-03-25 (-91d) |  |  | 92d → 170.3d |  |
| A58430 | Traffic signs, ground mounted, 2 Sheet Alumenium, (breakaway) Single post | 2027-06-26 → 2027-03-25 (-93d) | 2027-06-26 → 2027-03-27 (-91d) |  |  | 92d → 170.3d |  |
| A58440 | Traffic signs, ground mounted, Sheet Alumenium, (breakaway) Double post | 2027-06-27 → 2027-03-27 (-92d) | 2027-06-29 → 2027-03-30 (-91d) |  |  | 92d → 170.3d |  |

| ID | Task | Start | Finish | Duration | Complete | Total float | Predecessors |
| --- | --- | --- | --- | --- | --- | --- | --- |
| A58450 | Retroreflective raised pavement markers (Type A) | 2027-06-30 → 2027-03-30 (-92d) | 2027-06-30 → 2027-03-31 (-91d) |  |  | 111d → 189.3d |  |
| A58460 | Ceramic raised pavement markers | 2027-07-01 → 2027-03-31 (-92d) | 2027-07-01 → 2027-04-01 (-91d) |  |  | 111d → 189.3d |  |
| A58470 | Solar powered lighting cateyes pavement markers | 2027-07-03 → 2027-04-01 (-93d) | 2027-07-03 → 2027-04-03 (-91d) |  |  | 131d → 209.3d |  |
| 15 | **Road 15** | 2026-07-22 → 2026-08-15 (+24d) | 2027-07-06 → 2027-04-04 (-93d) |  |  |  |  |
| AGG | **Aggregate Base Course** | 2026-07-22 → 2026-08-15 (+24d) | 2026-07-28 → 2026-09-20 (+54d) |  |  |  |  |
| A58480 | Aggregate base course | 2026-07-22 → 2026-08-15 A (+24d) | 2026-07-28 → 2026-09-20 A (+54d) |  | 0% → 100% | 1d → none |  |
| BIT | **Bituminous Construction** | 2026-07-29 → 2026-08-15 (+17d) | 2026-07-29 → 2026-09-20 (+53d) |  |  |  |  |
| A58490 | Bituminous base course (Grading I - Class A) | 2026-07-29 → 2026-08-15 A (+17d) | 2026-07-29 → 2026-09-20 A (+53d) |  | 0% → 100% | 55d → none | A58480 → A58480, A58530 |
| ASP | **Asphalt Wearing Course** | 2027-06-19 → 2027-03-22 (-89d) | 2027-06-21 → 2027-03-23 (-90d) |  |  |  |  |
| A58500 | Bituminous concrete wearing course | 2027-06-19 → 2027-03-22 (-89d) | 2027-06-21 → 2027-03-23 (-90d) | 3d → 1d |  | 65d → 10.3d |  |
| CON | **Precast Concrete Curb** | 2027-06-22 → 2026-08-29 (-297d) | 2027-06-24 → 2026-12-13 (-193d) |  |  |  |  |
| A58510 | Concrete curb, Type (K1A) | 2027-06-22 → 2026-08-29 A (-297d) | 2027-06-22 → 2026-12-12 (-192d) |  | 0% → 13% | 89d → -61.93d | A58480, A58500, A10270 → A58480 |
| A58520 | Concrete curb, Type (K1B) | 2027-06-23 → 2026-08-29 A (-298d) | 2027-06-23 → 2026-12-13 (-192d) |  | 0% → 13% | 89d → -61.93d | A58510, A10270 → A58510 |
| A58530 | Concrete curb, Type (K2) | 2027-06-24 → 2026-08-29 A (-299d) | 2027-06-24 → 2026-12-13 (-193d) |  | 0% → 13% | 89d → -61.93d | A58520, A10270 → A58520 |
| PAV | **Pavement Markings** | 2027-06-26 → 2027-03-23 (-95d) | 2027-06-27 → 2027-03-25 (-94d) |  |  |  |  |
| A58540 | Retroreflective Thermoplastic White Traffic lines | 2027-06-26 → 2027-03-23 (-95d) | 2027-06-26 → 2027-03-24 (-94d) |  |  | 89d → 169.3d |  |
| A58550 | Retroreflective Thermoplastic Yellow Traffic lines | 2027-06-27 → 2027-03-24 (-95d) | 2027-06-27 → 2027-03-25 (-94d) |  |  | 89d → 169.3d |  |
| TRS | **Traffic Signage** | 2027-06-28 → 2027-03-25 (-95d) | 2027-07-06 → 2027-04-04 (-93d) |  |  |  |  |
| A58560 | Traffic signs, ground mounted, 1 Sheet Alumenium, (breakaway) Single post | 2027-06-28 → 2027-03-25 (-95d) | 2027-06-28 → 2027-03-27 (-93d) |  |  | 89d → 169.3d |  |
| A58570 | Traffic signs, ground mounted, 2 Sheet Alumenium, (breakaway) Single post | 2027-06-29 → 2027-03-27 (-94d) | 2027-06-29 → 2027-03-28 (-93d) |  |  | 89d → 169.3d |  |
| A58580 | Traffic signs, ground mounted, Sheet Alumenium, (breakaway) Double post | 2027-06-30 → 2027-03-28 (-94d) | 2027-07-03 → 2027-03-31 (-94d) |  |  | 89d → 169.3d |  |
| A58590 | Retroreflective raised pavement markers (Type A) | 2027-07-04 → 2027-03-31 (-95d) | 2027-07-04 → 2027-04-01 (-94d) |  |  | 108d → 188.3d |  |
| A58600 | Ceramic raised pavement markers | 2027-07-05 → 2027-04-01 (-95d) | 2027-07-05 → 2027-04-03 (-93d) |  |  | 108d → 188.3d |  |
| A58610 | Solar powered lighting cateyes pavement markers | 2027-07-06 → 2027-04-03 (-94d) | 2027-07-06 → 2027-04-04 (-93d) |  |  | 128d → 208.3d |  |
| 16 | **Road 16** | 2026-07-29 → 2026-08-29 (+31d) | 2027-07-08 → 2027-04-05 (-94d) |  |  |  |  |
| AGG | **Aggregate Base Course** | 2026-07-29 → 2026-08-29 (+31d) | 2026-08-04 → 2026-12-15 (+133d) |  |  |  |  |
| A58620 | Aggregate base course | 2026-07-29 → 2026-08-29 A (+31d) | 2026-08-04 → 2026-12-15 (+133d) |  | 0% → 25% | 1d → -78.02d |  |
| BIT | **Bituminous Construction** | 2026-08-05 → 2026-12-19 (+136d) | 2026-08-10 → 2026-12-24 (+136d) |  |  |  |  |
| A58630 | Bituminous base course (Grading I - Class A) | 2026-08-05 → 2026-12-19 (+136d) | 2026-08-10 → 2026-12-24 (+136d) |  |  | 45d → -71.82d | A58620 → A58620, A58670 |
| ASP | **Asphalt Wearing Course** | 2027-06-22 → 2027-03-23 (-91d) | 2027-06-23 → 2027-03-24 (-91d) |  |  |  |  |
| A58640 | Bituminous concrete wearing course | 2027-06-22 → 2027-03-23 (-91d) | 2027-06-23 → 2027-03-24 (-91d) | 2d → 1d |  | 65d → 10.3d |  |
| CON | **Precast Concrete Curb** | 2027-06-24 → 2026-12-15 (-191d) | 2027-06-27 → 2026-12-19 (-190d) |  |  |  |  |
| A58650 | Concrete curb, Type (K1A) | 2027-06-24 → 2026-12-15 (-191d) | 2027-06-24 → 2026-12-16 (-190d) |  |  | 87d → -71.82d | A58620, A58640, A10270 → A58620 |
| A58660 | Concrete curb, Type (K1B) | 2027-06-26 → 2026-12-16 (-192d) | 2027-06-26 → 2026-12-17 (-191d) |  |  | 87d → -71.82d | A58650, A10270 → A58650 |
| A58670 | Concrete curb, Type (K2) | 2027-06-27 → 2026-12-17 (-192d) | 2027-06-27 → 2026-12-19 (-190d) |  |  | 87d → -71.82d | A58660, A10270 → A58660 |
| PAV | **Pavement Markings** | 2027-06-28 → 2027-03-24 (-96d) | 2027-06-29 → 2027-03-27 (-94d) |  |  |  |  |
| A58680 | Retroreflective Thermoplastic White Traffic lines | 2027-06-28 → 2027-03-24 (-96d) | 2027-06-28 → 2027-03-25 (-95d) |  |  | 87d → 168.3d |  |
| A58690 | Retroreflective Thermoplastic Yellow Traffic lines | 2027-06-29 → 2027-03-25 (-96d) | 2027-06-29 → 2027-03-27 (-94d) |  |  | 87d → 168.3d |  |
| TRS | **Traffic Signage** | 2027-06-30 → 2027-03-27 (-95d) | 2027-07-08 → 2027-04-05 (-94d) |  |  |  |  |
| A58700 | Traffic signs, ground mounted, 1 Sheet Alumenium, (breakaway) Single post | 2027-06-30 → 2027-03-27 (-95d) | 2027-06-30 → 2027-03-28 (-94d) |  |  | 87d → 168.3d |  |
| A58710 | Traffic signs, ground mounted, 2 Sheet Alumenium, (breakaway) Single post | 2027-07-01 → 2027-03-28 (-95d) | 2027-07-01 → 2027-03-29 (-94d) |  |  | 87d → 168.3d |  |
| A58720 | Traffic signs, ground mounted, Sheet Alumenium, (breakaway) Double post | 2027-07-03 → 2027-03-29 (-96d) | 2027-07-05 → 2027-04-01 (-95d) |  |  | 87d → 168.3d |  |
| A58730 | Retroreflective raised pavement markers (Type A) | 2027-07-06 → 2027-04-01 (-96d) | 2027-07-06 → 2027-04-03 (-94d) |  |  | 106d → 187.3d |  |
| A58740 | Ceramic raised pavement markers | 2027-07-07 → 2027-04-03 (-95d) | 2027-07-07 → 2027-04-04 (-94d) |  |  | 106d → 187.3d |  |
| A58750 | Solar powered lighting cateyes pavement markers | 2027-07-08 → 2027-04-04 (-95d) | 2027-07-08 → 2027-04-05 (-94d) |  |  | 126d → 207.3d |  |
| 17 | **Road 17** | 2026-08-05 → 2026-08-29 (+24d) | 2027-07-11 → 2027-04-11 (-91d) |  |  |  |  |
| AGG | **Aggregate Base Course** | 2026-08-05 → 2026-08-29 (+24d) | 2026-08-11 → 2026-12-21 (+132d) |  |  |  |  |
| A58760 | Aggregate base course | 2026-08-05 → 2026-08-29 A (+24d) | 2026-08-11 → 2026-12-21 (+132d) |  | 0% → 30% | 1d → -78.02d |  |
| BIT | **Bituminous Construction** | 2026-08-12 → 2026-12-24 (+134d) | 2026-08-17 → 2026-12-30 (+135d) |  |  |  |  |
| A58770 | Bituminous base course (Grading I - Class A) | 2026-08-12 → 2026-12-24 (+134d) | 2026-08-17 → 2026-12-30 (+135d) |  |  | 37d → -76.02d | A58760 → A58760, A58810 |
| ASP | **Asphalt Wearing Course** | 2027-06-24 → 2027-03-24 (-92d) | 2027-06-26 → 2027-03-30 (-88d) |  |  |  |  |
| A58780 | Bituminous concrete wearing course | 2027-06-24 → 2027-03-24 (-92d) | 2027-06-26 → 2027-03-30 (-88d) | 2d → 5d |  | 65d → 10.3d |  |
| CON | **Precast Concrete Curb** | 2027-06-27 → 2026-12-21 (-188d) | 2027-06-29 → 2026-12-24 (-187d) |  |  |  |  |
| A58790 | Concrete curb, Type (K1A) | 2027-06-27 → 2026-12-21 (-188d) | 2027-06-27 → 2026-12-22 (-187d) |  |  | 83d → -76.02d | A58760, A58780, A10270 → A58760 |
| A58800 | Concrete curb, Type (K1B) | 2027-06-28 → 2026-12-22 (-188d) | 2027-06-28 → 2026-12-23 (-187d) |  |  | 83d → -76.02d | A58790, A10270 → A58790 |
| A58810 | Concrete curb, Type (K2) | 2027-06-29 → 2026-12-23 (-188d) | 2027-06-29 → 2026-12-24 (-187d) |  |  | 83d → -76.02d | A58800, A10270 → A58800 |
| PAV | **Pavement Markings** | 2027-06-30 → 2027-03-30 (-92d) | 2027-07-01 → 2027-04-01 (-91d) |  |  |  |  |
| A58820 | Retroreflective Thermoplastic White Traffic lines | 2027-06-30 → 2027-03-30 (-92d) | 2027-06-30 → 2027-03-31 (-91d) |  |  | 83d → 161.3d |  |
| A58830 | Retroreflective Thermoplastic Yellow Traffic lines | 2027-07-01 → 2027-03-31 (-92d) | 2027-07-01 → 2027-04-01 (-91d) |  |  | 83d → 161.3d |  |
| TRS | **Traffic Signage** | 2027-07-03 → 2027-04-01 (-93d) | 2027-07-11 → 2027-04-11 (-91d) |  |  |  |  |
| A58840 | Traffic signs, ground mounted, 1 Sheet Alumenium, (breakaway) Single post | 2027-07-03 → 2027-04-01 (-93d) | 2027-07-03 → 2027-04-03 (-91d) |  |  | 83d → 161.3d |  |
| A58850 | Traffic signs, ground mounted, 2 Sheet Alumenium, (breakaway) Single post | 2027-07-04 → 2027-04-03 (-92d) | 2027-07-04 → 2027-04-04 (-91d) |  |  | 83d → 161.3d |  |
| A58860 | Traffic signs, ground mounted, Sheet Alumenium, (breakaway) Double post | 2027-07-05 → 2027-04-04 (-92d) | 2027-07-07 → 2027-04-07 (-91d) |  |  | 83d → 161.3d |  |
| A58870 | Retroreflective raised pavement markers (Type A) | 2027-07-08 → 2027-04-07 (-92d) | 2027-07-08 → 2027-04-08 (-91d) |  |  | 83d → 161.3d |  |
| A58880 | Ceramic raised pavement markers | 2027-07-10 → 2027-04-08 (-93d) | 2027-07-10 → 2027-04-10 (-91d) |  |  | 83d → 161.3d |  |
| A58890 | Solar powered lighting cateyes pavement markers | 2027-07-11 → 2027-04-10 (-92d) | 2027-07-11 → 2027-04-11 (-91d) |  |  | 124d → 202.3d |  |
| 18 | **Collector 1** | 2026-08-12 → 2026-08-15 (+3d) | 2027-08-05 → 2027-04-20 (-107d) |  |  |  |  |
| AGG | **Aggregate Base Course** | 2026-08-12 → 2026-08-15 (+3d) | 2026-08-25 → 2026-09-20 (+26d) |  |  |  |  |
| A58900 | Aggregate base course | 2026-08-12 → 2026-08-15 A (+3d) | 2026-08-25 → 2026-09-20 A (+26d) |  | 0% → 100% | 1d → none |  |
| BIT | **Bituminous Construction** | 2026-08-26 → 2026-08-15 (-11d) | 2026-09-23 → 2026-09-20 (-3d) |  |  |  |  |

| ID | Task | Start | Finish | Duration | Complete | Total float | Predecessors |
| --- | --- | --- | --- | --- | --- | --- | --- |
| A58910 | Bituminous base course (Grading I - Class A) | 2026-08-26 → 2026-08-15 A (-11d) | 2026-09-23 → 2026-09-20 A (-3d) | 25d → 14d | 0% → 100% | 1d → none | A58900 → A58900, A58950 |
| ASP | **Asphalt Wearing Course** | 2027-06-27 → 2027-03-30 (-89d) | 2027-07-07 → 2027-04-03 (-95d) |  |  |  |  |
| A58920 | Bituminous concrete wearing course | 2027-06-27 → 2027-03-30 (-89d) | 2027-07-07 → 2027-04-03 (-95d) | 10d → 3d |  | 65d → 10.3d |  |
| CON | **Precast Concrete Curb** | 2027-07-08 → 2026-12-21 (-199d) | 2027-07-19 → 2027-01-02 (-198d) |  |  |  |  |
| A58930 | Concrete curb, Type (K1A) | 2027-07-08 → 2026-12-21 (-199d) | 2027-07-11 → 2026-12-24 (-199d) |  |  | 65d → -78.02d | A58900, A58920, A10270 → A58900 |
| A58940 | Concrete curb, Type (K1B) | 2027-07-12 → 2026-12-24 (-200d) | 2027-07-14 → 2026-12-28 (-198d) |  |  | 65d → -78.02d | A58930, A10270 → A58930 |
| A58950 | Concrete curb, Type (K2) | 2027-07-15 → 2026-12-28 (-199d) | 2027-07-19 → 2027-01-02 (-198d) |  |  | 65d → -78.02d | A58940, A10270 → A58940 |
| PAV | **Pavement Markings** | 2027-07-20 → 2027-04-03 (-108d) | 2027-07-24 → 2027-04-07 (-108d) |  |  |  |  |
| A58960 | Retroreflective Thermoplastic White Traffic lines | 2027-07-20 → 2027-04-03 (-108d) | 2027-07-21 → 2027-04-05 (-107d) |  |  | 65d → 15.3d |  |
| A58970 | Retroreflective Thermoplastic Yellow Traffic lines | 2027-07-22 → 2027-04-05 (-108d) | 2027-07-24 → 2027-04-07 (-108d) |  |  | 65d → 15.3d |  |
| TRS | **Traffic Signage** | 2027-07-25 → 2027-04-07 (-109d) | 2027-08-05 → 2027-04-20 (-107d) |  |  |  |  |
| A58980 | Traffic signs, ground mounted, 1 Sheet Alumenium, (breakaway) Single post | 2027-07-25 → 2027-04-07 (-109d) | 2027-07-26 → 2027-04-10 (-107d) |  |  | 65d → 15.3d |  |
| A58990 | Traffic signs, ground mounted, 2 Sheet Alumenium, (breakaway) Single post | 2027-07-27 → 2027-04-10 (-108d) | 2027-07-27 → 2027-04-11 (-107d) |  |  | 65d → 15.3d |  |
| A59000 | Traffic signs, ground mounted, Sheet Alumenium, (breakaway) Double post | 2027-07-28 → 2027-04-11 (-108d) | 2027-07-31 → 2027-04-14 (-108d) |  |  | 65d → 15.3d |  |
| A59010 | Retroreflective raised pavement markers (Type A) | 2027-08-01 → 2027-04-14 (-109d) | 2027-08-02 → 2027-04-17 (-107d) |  |  | 82d → 15.3d |  |
| A59020 | Ceramic raised pavement markers | 2027-08-03 → 2027-04-17 (-108d) | 2027-08-04 → 2027-04-19 (-107d) |  |  | 82d → 15.3d |  |
| A59030 | Solar powered lighting cateyes pavement markers | 2027-08-05 → 2027-04-19 (-108d) | 2027-08-05 → 2027-04-20 (-107d) |  |  | 102d → 15.3d |  |
| LW | **LANDSCAPE WORK** | 2027-04-17 → 2027-03-13 (-35d) | 2027-09-18 → 2027-06-02 (-108d) |  |  |  |  |
| 1 | **Road 1** | 2027-06-30 → 2027-03-13 (-109d) | 2027-08-17 → 2027-05-01 (-108d) |  |  |  |  |
| 2 | **Trees/ Palms** | 2027-06-30 → 2027-03-13 (-109d) | 2027-07-24 → 2027-04-06 (-109d) |  |  |  |  |
| A59040 | Roadside tree - Cordia sebestena | 2027-06-30 → 2027-03-13 (-109d) | 2027-07-24 → 2027-04-06 (-109d) |  |  | 113d → 206.3d |  |
| A59050 | Roadside tree - Parkinsonia aculeata | 2027-06-30 → 2027-03-13 (-109d) | 2027-07-24 → 2027-04-06 (-109d) |  |  | 113d → 206.3d |  |
| A59060 | Roadside tree - Dalbergia sissoo | 2027-06-30 → 2027-03-13 (-109d) | 2027-07-24 → 2027-04-06 (-109d) |  |  | 113d → 206.3d |  |
| A59070 | Roadside tree - Acacia stenophylla | 2027-06-30 → 2027-03-13 (-109d) | 2027-07-24 → 2027-04-06 (-109d) |  |  | 113d → 206.3d |  |
| A59080 | Roadside tree - Hibiscus tiliaceus | 2027-06-30 → 2027-03-13 (-109d) | 2027-07-24 → 2027-04-06 (-109d) |  |  | 113d → 206.3d |  |
| A59090 | Roadside tree - Azadirachla indica | 2027-06-30 → 2027-03-13 (-109d) | 2027-07-24 → 2027-04-06 (-109d) |  |  | 92d → 185.3d |  |
| 3 | **Miscellaneous Landscaping Items** | 2027-07-07 → 2027-03-20 (-109d) | 2027-07-31 → 2027-04-13 (-109d) |  |  |  |  |
| A59100 | Install Precast concrete block paving for sidewalk, mixed grey colour | 2027-07-07 → 2027-03-20 (-109d) | 2027-07-31 → 2027-04-13 (-109d) |  |  | 107d → 200.3d |  |
| A59110 | Install Precast concrete block paving for main intrsection, colour light grey | 2027-07-07 → 2027-03-20 (-109d) | 2027-07-31 → 2027-04-13 (-109d) |  |  | 107d → 200.3d |  |
| A59120 | install Precast concrete block paving for main intrsection, colour mid grey | 2027-07-07 → 2027-03-20 (-109d) | 2027-07-31 → 2027-04-13 (-109d) |  |  | 107d → 200.3d |  |
| A59130 | install Precast concrete block paving for main intrsection, colour dark grey | 2027-07-07 → 2027-03-20 (-109d) | 2027-07-31 → 2027-04-13 (-109d) |  |  | 107d → 200.3d |  |
| A59140 | Gravel, mixed dark beige + medium beige + light beige | 2027-07-07 → 2027-03-20 (-109d) | 2027-07-31 → 2027-04-13 (-109d) |  |  | 107d → 200.3d |  |
| A59150 | Concrete heel kerb | 2027-07-07 → 2027-03-20 (-109d) | 2027-07-31 → 2027-04-13 (-109d) |  |  | 107d → 200.3d |  |
| 1 | **Ground Cover And Shrubs** | 2027-07-25 → 2027-04-06 (-110d) | 2027-08-17 → 2027-05-01 (-108d) |  |  |  |  |
| A59160 | Lantana montevidensis | 2027-07-25 → 2027-04-06 (-110d) | 2027-08-17 → 2027-05-01 (-108d) |  |  | 92d → 185.3d |  |
| A59170 | Portulaca grandiflora | 2027-07-25 → 2027-04-06 (-110d) | 2027-08-17 → 2027-05-01 (-108d) |  |  | 92d → 185.3d |  |
| A59180 | Dodonaea viscosa | 2027-07-25 → 2027-04-06 (-110d) | 2027-08-17 → 2027-05-01 (-108d) |  |  | 92d → 185.3d |  |
| A59190 | Atriplex halimus | 2027-07-25 → 2027-04-06 (-110d) | 2027-08-17 → 2027-05-01 (-108d) |  |  | 92d → 185.3d |  |
| 2 | **Road 2** | 2027-04-17 → 2027-03-18 (-30d) | 2027-06-03 → 2027-05-06 (-28d) |  |  |  |  |
| 2 | **Trees/ Palms** | 2027-04-17 → 2027-03-18 (-30d) | 2027-05-10 → 2027-04-12 (-28d) |  |  |  |  |
| A59900 | Roadside tree - Cordia sebestena | 2027-04-17 → 2027-03-18 (-30d) | 2027-05-10 → 2027-04-12 (-28d) |  |  | 177d → 201.3d |  |
| A59910 | Roadside tree - Parkinsonia aculeata | 2027-04-17 → 2027-03-18 (-30d) | 2027-05-10 → 2027-04-12 (-28d) |  |  | 177d → 201.3d |  |
| A59920 | Roadside tree - Dalbergia sissoo | 2027-04-17 → 2027-03-18 (-30d) | 2027-05-10 → 2027-04-12 (-28d) |  |  | 177d → 201.3d |  |
| A59930 | Roadside tree - Acacia stenophylla | 2027-04-17 → 2027-03-18 (-30d) | 2027-05-10 → 2027-04-12 (-28d) |  |  | 177d → 201.3d |  |
| A59940 | Roadside tree - Hibiscus tiliaceus | 2027-04-17 → 2027-03-18 (-30d) | 2027-05-10 → 2027-04-12 (-28d) |  |  | 177d → 201.3d |  |
| A59950 | Roadside tree - Azadirachla indica | 2027-04-17 → 2027-03-18 (-30d) | 2027-05-10 → 2027-04-12 (-28d) |  |  | 156d → 180.3d |  |
| 3 | **Miscellaneous Landscaping Items** | 2027-04-24 → 2027-03-25 (-30d) | 2027-05-17 → 2027-04-19 (-28d) |  |  |  |  |
| A59960 | Install Precast concrete block paving for sidewalk, mixed grey colour | 2027-04-24 → 2027-03-25 (-30d) | 2027-05-17 → 2027-04-19 (-28d) |  |  | 171d → 195.3d |  |
| A59970 | Install Precast concrete block paving for main intrsection, colour light grey | 2027-04-24 → 2027-03-25 (-30d) | 2027-05-17 → 2027-04-19 (-28d) |  |  | 171d → 195.3d |  |
| A59980 | install Precast concrete block paving for main intrsection, colour mid grey | 2027-04-24 → 2027-03-25 (-30d) | 2027-05-17 → 2027-04-19 (-28d) |  |  | 171d → 195.3d |  |
| A59990 | install Precast concrete block paving for main intrsection, colour dark grey | 2027-04-24 → 2027-03-25 (-30d) | 2027-05-17 → 2027-04-19 (-28d) |  |  | 171d → 195.3d |  |
| A60000 | Gravel, mixed dark beige + medium beige + light beige | 2027-04-24 → 2027-03-25 (-30d) | 2027-05-17 → 2027-04-19 (-28d) |  |  | 171d → 195.3d |  |
| A60010 | Concrete heel kerb | 2027-04-24 → 2027-03-25 (-30d) | 2027-05-17 → 2027-04-19 (-28d) |  |  | 171d → 195.3d |  |
| 1 | **Ground Cover And Shrubs** | 2027-05-11 → 2027-04-12 (-29d) | 2027-06-03 → 2027-05-06 (-28d) |  |  |  |  |
| A59860 | Lantana montevidensis | 2027-05-11 → 2027-04-12 (-29d) | 2027-06-03 → 2027-05-06 (-28d) |  |  | 156d → 180.3d |  |
| A59870 | Portulaca grandiflora | 2027-05-11 → 2027-04-12 (-29d) | 2027-06-03 → 2027-05-06 (-28d) |  |  | 156d → 180.3d |  |
| A59880 | Dodonaea viscosa | 2027-05-11 → 2027-04-12 (-29d) | 2027-06-03 → 2027-05-06 (-28d) |  |  | 156d → 180.3d |  |
| A59890 | Atriplex halimus | 2027-05-11 → 2027-04-12 (-29d) | 2027-06-03 → 2027-05-06 (-28d) |  |  | 156d → 180.3d |  |
| 3 | **Road 3** | 2027-07-04 → 2027-04-01 (-94d) | 2027-08-21 → 2027-05-20 (-93d) |  |  |  |  |
| 2 | **Trees/ Palms** | 2027-07-04 → 2027-04-01 (-94d) | 2027-07-27 → 2027-04-26 (-92d) |  |  |  |  |
| A60060 | Roadside tree - Cordia sebestena | 2027-07-04 → 2027-04-01 (-94d) | 2027-07-27 → 2027-04-26 (-92d) |  |  | 110d → 189.3d |  |
| A60070 | Roadside tree - Parkinsonia aculeata | 2027-07-04 → 2027-04-01 (-94d) | 2027-07-27 → 2027-04-26 (-92d) |  |  | 110d → 189.3d |  |
| A60080 | Roadside tree - Dalbergia sissoo | 2027-07-04 → 2027-04-01 (-94d) | 2027-07-27 → 2027-04-26 (-92d) |  |  | 110d → 189.3d |  |
| A60090 | Roadside tree - Acacia stenophylla | 2027-07-04 → 2027-04-01 (-94d) | 2027-07-27 → 2027-04-26 (-92d) |  |  | 110d → 189.3d |  |
| A60100 | Roadside tree - Hibiscus tiliaceus | 2027-07-04 → 2027-04-01 (-94d) | 2027-07-27 → 2027-04-26 (-92d) |  |  | 110d → 189.3d |  |
| A60110 | Roadside tree - Azadirachla indica | 2027-07-04 → 2027-04-01 (-94d) | 2027-07-27 → 2027-04-26 (-92d) |  |  | 89d → 168.3d |  |
| 3 | **Miscellaneous Landscaping Items** | 2027-07-13 → 2027-04-11 (-93d) | 2027-08-05 → 2027-05-05 (-92d) |  |  |  |  |
| A60120 | Install Precast concrete block paving for sidewalk, mixed grey colour | 2027-07-13 → 2027-04-11 (-93d) | 2027-08-05 → 2027-05-05 (-92d) |  |  | 102d → 181.3d |  |
| A60130 | Install Precast concrete block paving for main intrsection, colour light grey | 2027-07-13 → 2027-04-11 (-93d) | 2027-08-05 → 2027-05-05 (-92d) |  |  | 102d → 181.3d |  |
| A60140 | install Precast concrete block paving for main intrsection, colour mid grey | 2027-07-13 → 2027-04-11 (-93d) | 2027-08-05 → 2027-05-05 (-92d) |  |  | 102d → 181.3d |  |

| ID | Task | Start | Finish | Total float |
| --- | --- | --- | --- | --- |
| A60150 | install Precast concrete block paving for main intrsection, colour dark grey | 2027-07-13 → 2027-04-11 (-93d) | 2027-08-05 → 2027-05-05 (-92d) | 102d → 181.3d |
| A60160 | Gravel, mixed dark beige + medium beige + light beige | 2027-07-13 → 2027-04-11 (-93d) | 2027-08-05 → 2027-05-05 (-92d) | 102d → 181.3d |
| A60170 | Concrete heel kerb | 2027-07-13 → 2027-04-11 (-93d) | 2027-08-05 → 2027-05-05 (-92d) | 102d → 181.3d |
| 1 | **Ground Cover And Shrubs** | 2027-07-28 → 2027-04-26 (-93d) | 2027-08-21 → 2027-05-20 (-93d) |  |
| A60020 | Lantana montevidensis | 2027-07-28 → 2027-04-26 (-93d) | 2027-08-21 → 2027-05-20 (-93d) | 89d → 168.3d |
| A60030 | Portulaca grandiflora | 2027-07-28 → 2027-04-26 (-93d) | 2027-08-21 → 2027-05-20 (-93d) | 89d → 168.3d |
| A60040 | Dodonaea viscosa | 2027-07-28 → 2027-04-26 (-93d) | 2027-08-21 → 2027-05-20 (-93d) | 89d → 168.3d |
| A60050 | Atriplex halimus | 2027-07-28 → 2027-04-26 (-93d) | 2027-08-21 → 2027-05-20 (-93d) | 89d → 168.3d |
| 4 | **Road 4** | 2027-06-12 → 2027-03-18 (-86d) | 2027-07-08 → 2027-04-15 (-84d) |  |
| 2 | **Trees/ Palms** | 2027-06-12 → 2027-03-18 (-86d) | 2027-06-14 → 2027-03-22 (-84d) |  |
| A60220 | Roadside tree - Cordia sebestena | 2027-06-12 → 2027-03-18 (-86d) | 2027-06-14 → 2027-03-22 (-84d) | 147d → 219.3d |
| A60230 | Roadside tree - Parkinsonia aculeata | 2027-06-12 → 2027-03-18 (-86d) | 2027-06-14 → 2027-03-22 (-84d) | 147d → 219.3d |
| A60240 | Roadside tree - Dalbergia sissoo | 2027-06-12 → 2027-03-18 (-86d) | 2027-06-14 → 2027-03-22 (-84d) | 147d → 219.3d |
| A60250 | Roadside tree - Acacia stenophylla | 2027-06-12 → 2027-03-18 (-86d) | 2027-06-14 → 2027-03-22 (-84d) | 147d → 219.3d |
| A60260 | Roadside tree - Hibiscus tiliaceus | 2027-06-12 → 2027-03-18 (-86d) | 2027-06-14 → 2027-03-22 (-84d) | 147d → 219.3d |
| A60270 | Roadside tree - Azadirachla indica | 2027-06-12 → 2027-03-18 (-86d) | 2027-06-14 → 2027-03-22 (-84d) | 126d → 198.3d |
| 3 | **Miscellaneous Landscaping Items** | 2027-06-14 → 2027-03-21 (-85d) | 2027-07-07 → 2027-04-14 (-84d) |  |
| A60280 | Install Precast concrete block paving for sidewalk, mixed grey colour | 2027-06-14 → 2027-03-21 (-85d) | 2027-07-07 → 2027-04-14 (-84d) | 127d → 199.3d |
| A60290 | Install Precast concrete block paving for main intrsection, colour light grey | 2027-06-14 → 2027-03-21 (-85d) | 2027-07-07 → 2027-04-14 (-84d) | 127d → 199.3d |
| A60300 | install Precast concrete block paving for main intrsection, colour mid grey | 2027-06-14 → 2027-03-21 (-85d) | 2027-07-07 → 2027-04-14 (-84d) | 127d → 199.3d |
| A60310 | install Precast concrete block paving for main intrsection, colour dark grey | 2027-06-14 → 2027-03-21 (-85d) | 2027-07-07 → 2027-04-14 (-84d) | 127d → 199.3d |
| A60320 | Gravel, mixed dark beige + medium beige + light beige | 2027-06-14 → 2027-03-21 (-85d) | 2027-07-07 → 2027-04-14 (-84d) | 127d → 199.3d |
| A60330 | Concrete heel kerb | 2027-06-14 → 2027-03-21 (-85d) | 2027-07-07 → 2027-04-14 (-84d) | 127d → 199.3d |
| 1 | **Ground Cover And Shrubs** | 2027-06-15 → 2027-03-22 (-85d) | 2027-07-08 → 2027-04-15 (-84d) |  |
| A60180 | Lantana montevidensis | 2027-06-15 → 2027-03-22 (-85d) | 2027-07-08 → 2027-04-15 (-84d) | 126d → 198.3d |
| A60190 | Portulaca grandiflora | 2027-06-15 → 2027-03-22 (-85d) | 2027-07-08 → 2027-04-15 (-84d) | 126d → 198.3d |
| A60200 | Dodonaea viscosa | 2027-06-15 → 2027-03-22 (-85d) | 2027-07-08 → 2027-04-15 (-84d) | 126d → 198.3d |
| A60210 | Atriplex halimus | 2027-06-15 → 2027-03-22 (-85d) | 2027-07-08 → 2027-04-15 (-84d) | 126d → 198.3d |
| 5 | **Road 5** | 2027-06-07 → 2027-03-20 (-79d) | 2027-07-25 → 2027-05-08 (-78d) |  |
| 2 | **Trees/ Palms** | 2027-06-07 → 2027-03-20 (-79d) | 2027-06-30 → 2027-04-13 (-78d) |  |
| A60380 | Roadside tree - Cordia sebestena | 2027-06-07 → 2027-03-20 (-79d) | 2027-06-30 → 2027-04-13 (-78d) | 133d → 200.3d |
| A60390 | Roadside tree - Parkinsonia aculeata | 2027-06-07 → 2027-03-20 (-79d) | 2027-06-30 → 2027-04-13 (-78d) | 133d → 200.3d |
| A60400 | Roadside tree - Dalbergia sissoo | 2027-06-07 → 2027-03-20 (-79d) | 2027-06-30 → 2027-04-13 (-78d) | 133d → 200.3d |
| A60410 | Roadside tree - Acacia stenophylla | 2027-06-07 → 2027-03-20 (-79d) | 2027-06-30 → 2027-04-13 (-78d) | 133d → 200.3d |
| A60420 | Roadside tree - Hibiscus tiliaceus | 2027-06-07 → 2027-03-20 (-79d) | 2027-06-30 → 2027-04-13 (-78d) | 133d → 200.3d |
| A60430 | Roadside tree - Azadirachla indica | 2027-06-07 → 2027-03-20 (-79d) | 2027-06-30 → 2027-04-13 (-78d) | 112d → 179.3d |
| 3 | **Miscellaneous Landscaping Items** | 2027-06-09 → 2027-03-22 (-79d) | 2027-07-03 → 2027-04-15 (-79d) |  |
| A60440 | Install Precast concrete block paving for sidewalk, mixed grey colour | 2027-06-09 → 2027-03-22 (-79d) | 2027-07-03 → 2027-04-15 (-79d) | 131d → 198.3d |
| A60450 | Install Precast concrete block paving for main intrsection, colour light grey | 2027-06-09 → 2027-03-22 (-79d) | 2027-07-03 → 2027-04-15 (-79d) | 131d → 198.3d |
| A60460 | install Precast concrete block paving for main intrsection, colour mid grey | 2027-06-09 → 2027-03-22 (-79d) | 2027-07-03 → 2027-04-15 (-79d) | 131d → 198.3d |
| A60470 | install Precast concrete block paving for main intrsection, colour dark grey | 2027-06-09 → 2027-03-22 (-79d) | 2027-07-03 → 2027-04-15 (-79d) | 131d → 198.3d |
| A60480 | Gravel, mixed dark beige + medium beige + light beige | 2027-06-09 → 2027-03-22 (-79d) | 2027-07-03 → 2027-04-15 (-79d) | 131d → 198.3d |
| A60490 | Concrete heel kerb | 2027-06-09 → 2027-03-22 (-79d) | 2027-07-03 → 2027-04-15 (-79d) | 131d → 198.3d |
| 1 | **Ground Cover And Shrubs** | 2027-07-01 → 2027-04-13 (-79d) | 2027-07-25 → 2027-05-08 (-78d) |  |
| A60340 | Lantana montevidensis | 2027-07-01 → 2027-04-13 (-79d) | 2027-07-25 → 2027-05-08 (-78d) | 112d → 179.3d |
| A60350 | Portulaca grandiflora | 2027-07-01 → 2027-04-13 (-79d) | 2027-07-25 → 2027-05-08 (-78d) | 112d → 179.3d |
| A60360 | Dodonaea viscosa | 2027-07-01 → 2027-04-13 (-79d) | 2027-07-25 → 2027-05-08 (-78d) | 112d → 179.3d |
| A60370 | Atriplex halimus | 2027-07-01 → 2027-04-13 (-79d) | 2027-07-25 → 2027-05-08 (-78d) | 112d → 179.3d |
| 6 | **Road 6** | 2027-06-07 → 2027-03-21 (-78d) | 2027-07-25 → 2027-05-09 (-77d) |  |
| 2 | **Trees/ Palms** | 2027-06-07 → 2027-03-21 (-78d) | 2027-06-30 → 2027-04-14 (-77d) |  |
| A60540 | Roadside tree - Cordia sebestena | 2027-06-07 → 2027-03-21 (-78d) | 2027-06-30 → 2027-04-14 (-77d) | 133d → 199.3d |
| A60550 | Roadside tree - Parkinsonia aculeata | 2027-06-07 → 2027-03-21 (-78d) | 2027-06-30 → 2027-04-14 (-77d) | 133d → 199.3d |
| A60560 | Roadside tree - Dalbergia sissoo | 2027-06-07 → 2027-03-21 (-78d) | 2027-06-30 → 2027-04-14 (-77d) | 133d → 199.3d |
| A60570 | Roadside tree - Acacia stenophylla | 2027-06-07 → 2027-03-21 (-78d) | 2027-06-30 → 2027-04-14 (-77d) | 133d → 199.3d |
| A60580 | Roadside tree - Hibiscus tiliaceus | 2027-06-07 → 2027-03-21 (-78d) | 2027-06-30 → 2027-04-14 (-77d) | 133d → 199.3d |
| A60590 | Roadside tree - Azadirachla indica | 2027-06-07 → 2027-03-21 (-78d) | 2027-06-30 → 2027-04-14 (-77d) | 112d → 178.3d |
| 3 | **Miscellaneous Landscaping Items** | 2027-06-09 → 2027-03-23 (-78d) | 2027-07-03 → 2027-04-17 (-77d) |  |
| A60600 | Install Precast concrete block paving for sidewalk, mixed grey colour | 2027-06-09 → 2027-03-23 (-78d) | 2027-07-03 → 2027-04-17 (-77d) | 131d → 197.3d |
| A60610 | Install Precast concrete block paving for main intrsection, colour light grey | 2027-06-09 → 2027-03-23 (-78d) | 2027-07-03 → 2027-04-17 (-77d) | 131d → 197.3d |
| A60620 | install Precast concrete block paving for main intrsection, colour mid grey | 2027-06-09 → 2027-03-23 (-78d) | 2027-07-03 → 2027-04-17 (-77d) | 131d → 197.3d |
| A60630 | install Precast concrete block paving for main intrsection, colour dark grey | 2027-06-09 → 2027-03-23 (-78d) | 2027-07-03 → 2027-04-17 (-77d) | 131d → 197.3d |
| A60640 | Gravel, mixed dark beige + medium beige + light beige | 2027-06-09 → 2027-03-23 (-78d) | 2027-07-03 → 2027-04-17 (-77d) | 131d → 197.3d |
| A60650 | Concrete heel kerb | 2027-06-09 → 2027-03-23 (-78d) | 2027-07-03 → 2027-04-17 (-77d) | 131d → 197.3d |
| 1 | **Ground Cover And Shrubs** | 2027-07-01 → 2027-04-14 (-78d) | 2027-07-25 → 2027-05-09 (-77d) |  |
| A60500 | Lantana montevidensis | 2027-07-01 → 2027-04-14 (-78d) | 2027-07-25 → 2027-05-09 (-77d) | 112d → 178.3d |
| A60510 | Portulaca grandiflora | 2027-07-01 → 2027-04-14 (-78d) | 2027-07-25 → 2027-05-09 (-77d) | 112d → 178.3d |
| A60520 | Dodonaea viscosa | 2027-07-01 → 2027-04-14 (-78d) | 2027-07-25 → 2027-05-09 (-77d) | 112d → 178.3d |
| A60530 | Atriplex halimus | 2027-07-01 → 2027-04-14 (-78d) | 2027-07-25 → 2027-05-09 (-77d) | 112d → 178.3d |
| 7 | **Road 7** | 2027-06-07 → 2027-03-22 (-77d) | 2027-07-25 → 2027-05-10 (-76d) |  |
| 2 | **Trees/ Palms** | 2027-06-07 → 2027-03-22 (-77d) | 2027-06-30 → 2027-04-15 (-76d) |  |

| ID | Task | Start | Finish | Total float |
| --- | --- | --- | --- | --- |
| A60700 | Roadside tree - Cordia sebestena | 2027-06-07 → 2027-03-22 (-77d) | 2027-06-30 → 2027-04-15 (-76d) | 133d → 198.3d |
| A60710 | Roadside tree - Parkinsonia aculeata | 2027-06-07 → 2027-03-22 (-77d) | 2027-06-30 → 2027-04-15 (-76d) | 133d → 198.3d |
| A60720 | Roadside tree - Dalbergia sissoo | 2027-06-07 → 2027-03-22 (-77d) | 2027-06-30 → 2027-04-15 (-76d) | 133d → 198.3d |
| A60730 | Roadside tree - Acacia stenophylla | 2027-06-07 → 2027-03-22 (-77d) | 2027-06-30 → 2027-04-15 (-76d) | 133d → 198.3d |
| A60740 | Roadside tree - Hibiscus tiliaceus | 2027-06-07 → 2027-03-22 (-77d) | 2027-06-30 → 2027-04-15 (-76d) | 133d → 198.3d |
| A60750 | Roadside tree - Azadirachla indica | 2027-06-07 → 2027-03-22 (-77d) | 2027-06-30 → 2027-04-15 (-76d) | 112d → 177.3d |
| 3 | **Miscellaneous Landscaping Items** | 2027-06-09 → 2027-03-24 (-77d) | 2027-07-03 → 2027-04-18 (-76d) |  |
| A60760 | Install Precast concrete block paving for sidewalk, mixed grey colour | 2027-06-09 → 2027-03-24 (-77d) | 2027-07-03 → 2027-04-18 (-76d) | 131d → 196.3d |
| A60770 | Install Precast concrete block paving for main intrsection, colour light grey | 2027-06-09 → 2027-03-24 (-77d) | 2027-07-03 → 2027-04-18 (-76d) | 131d → 196.3d |
| A60780 | install Precast concrete block paving for main intrsection, colour mid grey | 2027-06-09 → 2027-03-24 (-77d) | 2027-07-03 → 2027-04-18 (-76d) | 131d → 196.3d |
| A60790 | install Precast concrete block paving for main intrsection, colour dark grey | 2027-06-09 → 2027-03-24 (-77d) | 2027-07-03 → 2027-04-18 (-76d) | 131d → 196.3d |
| A60800 | Gravel, mixed dark beige + medium beige + light beige | 2027-06-09 → 2027-03-24 (-77d) | 2027-07-03 → 2027-04-18 (-76d) | 131d → 196.3d |
| A60810 | Concrete heel kerb | 2027-06-09 → 2027-03-24 (-77d) | 2027-07-03 → 2027-04-18 (-76d) | 131d → 196.3d |
| 1 | **Ground Cover And Shrubs** | 2027-07-01 → 2027-04-15 (-77d) | 2027-07-25 → 2027-05-10 (-76d) |  |
| A60660 | Lantana montevidensis | 2027-07-01 → 2027-04-15 (-77d) | 2027-07-25 → 2027-05-10 (-76d) | 112d → 177.3d |
| A60670 | Portulaca grandiflora | 2027-07-01 → 2027-04-15 (-77d) | 2027-07-25 → 2027-05-10 (-76d) | 112d → 177.3d |
| A60680 | Dodonaea viscosa | 2027-07-01 → 2027-04-15 (-77d) | 2027-07-25 → 2027-05-10 (-76d) | 112d → 177.3d |
| A60690 | Atriplex halimus | 2027-07-01 → 2027-04-15 (-77d) | 2027-07-25 → 2027-05-10 (-76d) | 112d → 177.3d |
| 8 | **Road 8** | 2027-06-07 → 2027-03-23 (-76d) | 2027-07-25 → 2027-05-11 (-75d) |  |
| 2 | **Trees/ Palms** | 2027-06-07 → 2027-03-23 (-76d) | 2027-06-30 → 2027-04-17 (-74d) |  |
| A60860 | Roadside tree - Cordia sebestena | 2027-06-07 → 2027-03-23 (-76d) | 2027-06-30 → 2027-04-17 (-74d) | 133d → 197.3d |
| A60870 | Roadside tree - Parkinsonia aculeata | 2027-06-07 → 2027-03-23 (-76d) | 2027-06-30 → 2027-04-17 (-74d) | 133d → 197.3d |
| A60880 | Roadside tree - Dalbergia sissoo | 2027-06-07 → 2027-03-23 (-76d) | 2027-06-30 → 2027-04-17 (-74d) | 133d → 197.3d |
| A60890 | Roadside tree - Acacia stenophylla | 2027-06-07 → 2027-03-23 (-76d) | 2027-06-30 → 2027-04-17 (-74d) | 133d → 197.3d |
| A60900 | Roadside tree - Hibiscus tiliaceus | 2027-06-07 → 2027-03-23 (-76d) | 2027-06-30 → 2027-04-17 (-74d) | 133d → 197.3d |
| A60910 | Roadside tree - Azadirachla indica | 2027-06-07 → 2027-03-23 (-76d) | 2027-06-30 → 2027-04-17 (-74d) | 112d → 176.3d |
| 3 | **Miscellaneous Landscaping Items** | 2027-06-09 → 2027-03-25 (-76d) | 2027-07-03 → 2027-04-19 (-75d) |  |
| A60920 | Install Precast concrete block paving for sidewalk, mixed grey colour | 2027-06-09 → 2027-03-25 (-76d) | 2027-07-03 → 2027-04-19 (-75d) | 131d → 195.3d |
| A60930 | Install Precast concrete block paving for main intrsection, colour light grey | 2027-06-09 → 2027-03-25 (-76d) | 2027-07-03 → 2027-04-19 (-75d) | 131d → 195.3d |
| A60940 | install Precast concrete block paving for main intrsection, colour mid grey | 2027-06-09 → 2027-03-25 (-76d) | 2027-07-03 → 2027-04-19 (-75d) | 131d → 195.3d |
| A60950 | install Precast concrete block paving for main intrsection, colour dark grey | 2027-06-09 → 2027-03-25 (-76d) | 2027-07-03 → 2027-04-19 (-75d) | 131d → 195.3d |
| A60960 | Gravel, mixed dark beige + medium beige + light beige | 2027-06-09 → 2027-03-25 (-76d) | 2027-07-03 → 2027-04-19 (-75d) | 131d → 195.3d |
| A60970 | Concrete heel kerb | 2027-06-09 → 2027-03-25 (-76d) | 2027-07-03 → 2027-04-19 (-75d) | 131d → 195.3d |
| 1 | **Ground Cover And Shrubs** | 2027-07-01 → 2027-04-17 (-75d) | 2027-07-25 → 2027-05-11 (-75d) |  |
| A60820 | Lantana montevidensis | 2027-07-01 → 2027-04-17 (-75d) | 2027-07-25 → 2027-05-11 (-75d) | 112d → 176.3d |
| A60830 | Portulaca grandiflora | 2027-07-01 → 2027-04-17 (-75d) | 2027-07-25 → 2027-05-11 (-75d) | 112d → 176.3d |
| A60840 | Dodonaea viscosa | 2027-07-01 → 2027-04-17 (-75d) | 2027-07-25 → 2027-05-11 (-75d) | 112d → 176.3d |
| A60850 | Atriplex halimus | 2027-07-01 → 2027-04-17 (-75d) | 2027-07-25 → 2027-05-11 (-75d) | 112d → 176.3d |
| 9 | **Road 9** | 2027-06-13 → 2027-03-24 (-81d) | 2027-07-31 → 2027-05-12 (-80d) |  |
| 2 | **Trees/ Palms** | 2027-06-13 → 2027-03-24 (-81d) | 2027-07-06 → 2027-04-18 (-79d) |  |
| A61020 | Roadside tree - Cordia sebestena | 2027-06-13 → 2027-03-24 (-81d) | 2027-07-06 → 2027-04-18 (-79d) | 128d → 196.3d |
| A61030 | Roadside tree - Parkinsonia aculeata | 2027-06-13 → 2027-03-24 (-81d) | 2027-07-06 → 2027-04-18 (-79d) | 128d → 196.3d |
| A61040 | Roadside tree - Dalbergia sissoo | 2027-06-13 → 2027-03-24 (-81d) | 2027-07-06 → 2027-04-18 (-79d) | 128d → 196.3d |
| A61050 | Roadside tree - Acacia stenophylla | 2027-06-13 → 2027-03-24 (-81d) | 2027-07-06 → 2027-04-18 (-79d) | 128d → 196.3d |
| A61060 | Roadside tree - Hibiscus tiliaceus | 2027-06-13 → 2027-03-24 (-81d) | 2027-07-06 → 2027-04-18 (-79d) | 128d → 196.3d |
| A61070 | Roadside tree - Azadirachla indica | 2027-06-13 → 2027-03-24 (-81d) | 2027-07-06 → 2027-04-18 (-79d) | 107d → 175.3d |
| 3 | **Miscellaneous Landscaping Items** | 2027-06-15 → 2027-03-27 (-80d) | 2027-07-08 → 2027-04-20 (-79d) |  |
| A61080 | Install Precast concrete block paving for sidewalk, mixed grey colour | 2027-06-15 → 2027-03-27 (-80d) | 2027-07-08 → 2027-04-20 (-79d) | 126d → 194.3d |
| A61090 | Install Precast concrete block paving for main intrsection, colour light grey | 2027-06-15 → 2027-03-27 (-80d) | 2027-07-08 → 2027-04-20 (-79d) | 126d → 194.3d |
| A61100 | install Precast concrete block paving for main intrsection, colour mid grey | 2027-06-15 → 2027-03-27 (-80d) | 2027-07-08 → 2027-04-20 (-79d) | 126d → 194.3d |
| A61110 | install Precast concrete block paving for main intrsection, colour dark grey | 2027-06-15 → 2027-03-27 (-80d) | 2027-07-08 → 2027-04-20 (-79d) | 126d → 194.3d |
| A61120 | Gravel, mixed dark beige + medium beige + light beige | 2027-06-15 → 2027-03-27 (-80d) | 2027-07-08 → 2027-04-20 (-79d) | 126d → 194.3d |
| A61130 | Concrete heel kerb | 2027-06-15 → 2027-03-27 (-80d) | 2027-07-08 → 2027-04-20 (-79d) | 126d → 194.3d |
| 1 | **Ground Cover And Shrubs** | 2027-07-07 → 2027-04-18 (-80d) | 2027-07-31 → 2027-05-12 (-80d) |  |
| A60980 | Lantana montevidensis | 2027-07-07 → 2027-04-18 (-80d) | 2027-07-31 → 2027-05-12 (-80d) | 107d → 175.3d |
| A60990 | Portulaca grandiflora | 2027-07-07 → 2027-04-18 (-80d) | 2027-07-31 → 2027-05-12 (-80d) | 107d → 175.3d |
| A61000 | Dodonaea viscosa | 2027-07-07 → 2027-04-18 (-80d) | 2027-07-31 → 2027-05-12 (-80d) | 107d → 175.3d |
| A61010 | Atriplex halimus | 2027-07-07 → 2027-04-18 (-80d) | 2027-07-31 → 2027-05-12 (-80d) | 107d → 175.3d |
| 10 | **Road 10** | 2027-06-14 → 2027-03-25 (-81d) | 2027-08-01 → 2027-05-13 (-80d) |  |
| 2 | **Trees/ Palms** | 2027-06-14 → 2027-03-25 (-81d) | 2027-07-07 → 2027-04-19 (-79d) |  |
| A61180 | Roadside tree - Cordia sebestena | 2027-06-14 → 2027-03-25 (-81d) | 2027-07-07 → 2027-04-19 (-79d) | 127d → 195.3d |
| A61190 | Roadside tree - Parkinsonia aculeata | 2027-06-14 → 2027-03-25 (-81d) | 2027-07-07 → 2027-04-19 (-79d) | 127d → 195.3d |
| A61200 | Roadside tree - Dalbergia sissoo | 2027-06-14 → 2027-03-25 (-81d) | 2027-07-07 → 2027-04-19 (-79d) | 127d → 195.3d |
| A61210 | Roadside tree - Acacia stenophylla | 2027-06-14 → 2027-03-25 (-81d) | 2027-07-07 → 2027-04-19 (-79d) | 127d → 195.3d |
| A61220 | Roadside tree - Hibiscus tiliaceus | 2027-06-14 → 2027-03-25 (-81d) | 2027-07-07 → 2027-04-19 (-79d) | 127d → 195.3d |
| A61230 | Roadside tree - Azadirachla indica | 2027-06-14 → 2027-03-25 (-81d) | 2027-07-07 → 2027-04-19 (-79d) | 106d → 174.3d |
| 3 | **Miscellaneous Landscaping Items** | 2027-06-16 → 2027-03-28 (-80d) | 2027-07-10 → 2027-04-21 (-80d) |  |
| A61240 | Install Precast concrete block paving for sidewalk, mixed grey colour | 2027-06-16 → 2027-03-28 (-80d) | 2027-07-10 → 2027-04-21 (-80d) | 125d → 193.3d |
| A61250 | Install Precast concrete block paving for main intrsection, colour light grey | 2027-06-16 → 2027-03-28 (-80d) | 2027-07-10 → 2027-04-21 (-80d) | 125d → 193.3d |
| A61260 | install Precast concrete block paving for main intrsection, colour mid grey | 2027-06-16 → 2027-03-28 (-80d) | 2027-07-10 → 2027-04-21 (-80d) | 125d → 193.3d |

| ID | Task | Start | Finish | Total float |
| --- | --- | --- | --- | --- |
| A61270 | install Precast concrete block paving for main intrsection, colour dark grey | 2027-06-16 → 2027-03-28 (-80d) | 2027-07-10 → 2027-04-21 (-80d) | 125d → 193.3d |
| A61280 | Gravel, mixed dark beige + medium beige + light beige | 2027-06-16 → 2027-03-28 (-80d) | 2027-07-10 → 2027-04-21 (-80d) | 125d → 193.3d |
| A61290 | Concrete heel kerb | 2027-06-16 → 2027-03-28 (-80d) | 2027-07-10 → 2027-04-21 (-80d) | 125d → 193.3d |
| 1 | **Ground Cover And Shrubs** | 2027-07-08 → 2027-04-19 (-80d) | 2027-08-01 → 2027-05-13 (-80d) |  |
| A61140 | Lantana montevidensis | 2027-07-08 → 2027-04-19 (-80d) | 2027-08-01 → 2027-05-13 (-80d) | 106d → 174.3d |
| A61150 | Portulaca grandiflora | 2027-07-08 → 2027-04-19 (-80d) | 2027-08-01 → 2027-05-13 (-80d) | 106d → 174.3d |
| A61160 | Dodonaea viscosa | 2027-07-08 → 2027-04-19 (-80d) | 2027-08-01 → 2027-05-13 (-80d) | 106d → 174.3d |
| A61170 | Atriplex halimus | 2027-07-08 → 2027-04-19 (-80d) | 2027-08-01 → 2027-05-13 (-80d) | 106d → 174.3d |
| 11 | **Road 11** | 2027-06-20 → 2027-03-27 (-85d) | 2027-08-07 → 2027-05-15 (-84d) |  |
| 2 | **Trees/ Palms** | 2027-06-20 → 2027-03-27 (-85d) | 2027-07-13 → 2027-04-20 (-84d) |  |
| A61340 | Roadside tree - Cordia sebestena | 2027-06-20 → 2027-03-27 (-85d) | 2027-07-13 → 2027-04-20 (-84d) | 122d → 194.3d |
| A61350 | Roadside tree - Parkinsonia aculeata | 2027-06-20 → 2027-03-27 (-85d) | 2027-07-13 → 2027-04-20 (-84d) | 122d → 194.3d |
| A61360 | Roadside tree - Dalbergia sissoo | 2027-06-20 → 2027-03-27 (-85d) | 2027-07-13 → 2027-04-20 (-84d) | 122d → 194.3d |
| A61370 | Roadside tree - Acacia stenophylla | 2027-06-20 → 2027-03-27 (-85d) | 2027-07-13 → 2027-04-20 (-84d) | 122d → 194.3d |
| A61380 | Roadside tree - Hibiscus tiliaceus | 2027-06-20 → 2027-03-27 (-85d) | 2027-07-13 → 2027-04-20 (-84d) | 122d → 194.3d |
| A61390 | Roadside tree - Azadirachla indica | 2027-06-20 → 2027-03-27 (-85d) | 2027-07-13 → 2027-04-20 (-84d) | 101d → 173.3d |
| 3 | **Miscellaneous Landscaping Items** | 2027-06-22 → 2027-03-29 (-85d) | 2027-07-15 → 2027-04-22 (-84d) |  |
| A61400 | Install Precast concrete block paving for sidewalk, mixed grey colour | 2027-06-22 → 2027-03-29 (-85d) | 2027-07-15 → 2027-04-22 (-84d) | 120d → 192.3d |
| A61410 | Install Precast concrete block paving for main intrsection, colour light grey | 2027-06-22 → 2027-03-29 (-85d) | 2027-07-15 → 2027-04-22 (-84d) | 120d → 192.3d |
| A61420 | install Precast concrete block paving for main intrsection, colour mid grey | 2027-06-22 → 2027-03-29 (-85d) | 2027-07-15 → 2027-04-22 (-84d) | 120d → 192.3d |
| A61430 | install Precast concrete block paving for main intrsection, colour dark grey | 2027-06-22 → 2027-03-29 (-85d) | 2027-07-15 → 2027-04-22 (-84d) | 120d → 192.3d |
| A61440 | Gravel, mixed dark beige + medium beige + light beige | 2027-06-22 → 2027-03-29 (-85d) | 2027-07-15 → 2027-04-22 (-84d) | 120d → 192.3d |
| A61450 | Concrete heel kerb | 2027-06-22 → 2027-03-29 (-85d) | 2027-07-15 → 2027-04-22 (-84d) | 120d → 192.3d |
| 1 | **Ground Cover And Shrubs** | 2027-07-14 → 2027-04-20 (-85d) | 2027-08-07 → 2027-05-15 (-84d) |  |
| A61300 | Lantana montevidensis | 2027-07-14 → 2027-04-20 (-85d) | 2027-08-07 → 2027-05-15 (-84d) | 101d → 173.3d |
| A61310 | Portulaca grandiflora | 2027-07-14 → 2027-04-20 (-85d) | 2027-08-07 → 2027-05-15 (-84d) | 101d → 173.3d |
| A61320 | Dodonaea viscosa | 2027-07-14 → 2027-04-20 (-85d) | 2027-08-07 → 2027-05-15 (-84d) | 101d → 173.3d |
| A61330 | Atriplex halimus | 2027-07-14 → 2027-04-20 (-85d) | 2027-08-07 → 2027-05-15 (-84d) | 101d → 173.3d |
| 12 | **Road 12** | 2027-06-23 → 2027-03-28 (-87d) | 2027-08-10 → 2027-05-16 (-86d) |  |
| 2 | **Trees/ Palms** | 2027-06-23 → 2027-03-28 (-87d) | 2027-07-17 → 2027-04-21 (-87d) |  |
| A61500 | Roadside tree - Cordia sebestena | 2027-06-23 → 2027-03-28 (-87d) | 2027-07-17 → 2027-04-21 (-87d) | 119d → 193.3d |
| A61510 | Roadside tree - Parkinsonia aculeata | 2027-06-23 → 2027-03-28 (-87d) | 2027-07-17 → 2027-04-21 (-87d) | 119d → 193.3d |
| A61520 | Roadside tree - Dalbergia sissoo | 2027-06-23 → 2027-03-28 (-87d) | 2027-07-17 → 2027-04-21 (-87d) | 119d → 193.3d |
| A61530 | Roadside tree - Acacia stenophylla | 2027-06-23 → 2027-03-28 (-87d) | 2027-07-17 → 2027-04-21 (-87d) | 119d → 193.3d |
| A61540 | Roadside tree - Hibiscus tiliaceus | 2027-06-23 → 2027-03-28 (-87d) | 2027-07-17 → 2027-04-21 (-87d) | 119d → 193.3d |
| A61550 | Roadside tree - Azadirachla indica | 2027-06-23 → 2027-03-28 (-87d) | 2027-07-17 → 2027-04-21 (-87d) | 98d → 172.3d |
| 3 | **Miscellaneous Landscaping Items** | 2027-06-26 → 2027-03-30 (-88d) | 2027-07-19 → 2027-04-24 (-86d) |  |
| A61560 | Install Precast concrete block paving for sidewalk, mixed grey colour | 2027-06-26 → 2027-03-30 (-88d) | 2027-07-19 → 2027-04-24 (-86d) | 117d → 191.3d |
| A61570 | Install Precast concrete block paving for main intrsection, colour light grey | 2027-06-26 → 2027-03-30 (-88d) | 2027-07-19 → 2027-04-24 (-86d) | 117d → 191.3d |
| A61580 | install Precast concrete block paving for main intrsection, colour mid grey | 2027-06-26 → 2027-03-30 (-88d) | 2027-07-19 → 2027-04-24 (-86d) | 117d → 191.3d |
| A61590 | install Precast concrete block paving for main intrsection, colour dark grey | 2027-06-26 → 2027-03-30 (-88d) | 2027-07-19 → 2027-04-24 (-86d) | 117d → 191.3d |
| A61600 | Gravel, mixed dark beige + medium beige + light beige | 2027-06-26 → 2027-03-30 (-88d) | 2027-07-19 → 2027-04-24 (-86d) | 117d → 191.3d |
| A61610 | Concrete heel kerb | 2027-06-26 → 2027-03-30 (-88d) | 2027-07-19 → 2027-04-24 (-86d) | 117d → 191.3d |
| 1 | **Ground Cover And Shrubs** | 2027-07-18 → 2027-04-21 (-88d) | 2027-08-10 → 2027-05-16 (-86d) |  |
| A61460 | Lantana montevidensis | 2027-07-18 → 2027-04-21 (-88d) | 2027-08-10 → 2027-05-16 (-86d) | 98d → 172.3d |
| A61470 | Portulaca grandiflora | 2027-07-18 → 2027-04-21 (-88d) | 2027-08-10 → 2027-05-16 (-86d) | 98d → 172.3d |
| A61480 | Dodonaea viscosa | 2027-07-18 → 2027-04-21 (-88d) | 2027-08-10 → 2027-05-16 (-86d) | 98d → 172.3d |
| A61490 | Atriplex halimus | 2027-07-18 → 2027-04-21 (-88d) | 2027-08-10 → 2027-05-16 (-86d) | 98d → 172.3d |
| 13 | **Road 13** | 2027-06-27 → 2027-03-29 (-90d) | 2027-08-14 → 2027-05-17 (-89d) |  |
| 2 | **Trees/ Palms** | 2027-06-27 → 2027-03-29 (-90d) | 2027-07-20 → 2027-04-22 (-89d) |  |
| A61660 | Roadside tree - Cordia sebestena | 2027-06-27 → 2027-03-29 (-90d) | 2027-07-20 → 2027-04-22 (-89d) | 116d → 192.3d |
| A61670 | Roadside tree - Parkinsonia aculeata | 2027-06-27 → 2027-03-29 (-90d) | 2027-07-20 → 2027-04-22 (-89d) | 116d → 192.3d |
| A61680 | Roadside tree - Dalbergia sissoo | 2027-06-27 → 2027-03-29 (-90d) | 2027-07-20 → 2027-04-22 (-89d) | 116d → 192.3d |
| A61690 | Roadside tree - Acacia stenophylla | 2027-06-27 → 2027-03-29 (-90d) | 2027-07-20 → 2027-04-22 (-89d) | 116d → 192.3d |
| A61700 | Roadside tree - Hibiscus tiliaceus | 2027-06-27 → 2027-03-29 (-90d) | 2027-07-20 → 2027-04-22 (-89d) | 116d → 192.3d |
| A61710 | Roadside tree - Azadirachla indica | 2027-06-27 → 2027-03-29 (-90d) | 2027-07-20 → 2027-04-22 (-89d) | 95d → 171.3d |
| 3 | **Miscellaneous Landscaping Items** | 2027-06-29 → 2027-03-31 (-90d) | 2027-07-22 → 2027-04-25 (-88d) |  |
| A61720 | Install Precast concrete block paving for sidewalk, mixed grey colour | 2027-06-29 → 2027-03-31 (-90d) | 2027-07-22 → 2027-04-25 (-88d) | 114d → 190.3d |
| A61730 | Install Precast concrete block paving for main intrsection, colour light grey | 2027-06-29 → 2027-03-31 (-90d) | 2027-07-22 → 2027-04-25 (-88d) | 114d → 190.3d |
| A61740 | install Precast concrete block paving for main intrsection, colour mid grey | 2027-06-29 → 2027-03-31 (-90d) | 2027-07-22 → 2027-04-25 (-88d) | 114d → 190.3d |
| A61750 | install Precast concrete block paving for main intrsection, colour dark grey | 2027-06-29 → 2027-03-31 (-90d) | 2027-07-22 → 2027-04-25 (-88d) | 114d → 190.3d |
| A61760 | Gravel, mixed dark beige + medium beige + light beige | 2027-06-29 → 2027-03-31 (-90d) | 2027-07-22 → 2027-04-25 (-88d) | 114d → 190.3d |
| A61770 | Concrete heel kerb | 2027-06-29 → 2027-03-31 (-90d) | 2027-07-22 → 2027-04-25 (-88d) | 114d → 190.3d |
| 1 | **Ground Cover And Shrubs** | 2027-07-21 → 2027-04-22 (-90d) | 2027-08-14 → 2027-05-17 (-89d) |  |
| A61620 | Lantana montevidensis | 2027-07-21 → 2027-04-22 (-90d) | 2027-08-14 → 2027-05-17 (-89d) | 95d → 171.3d |
| A61630 | Portulaca grandiflora | 2027-07-21 → 2027-04-22 (-90d) | 2027-08-14 → 2027-05-17 (-89d) | 95d → 171.3d |
| A61640 | Dodonaea viscosa | 2027-07-21 → 2027-04-22 (-90d) | 2027-08-14 → 2027-05-17 (-89d) | 95d → 171.3d |
| A61650 | Atriplex halimus | 2027-07-21 → 2027-04-22 (-90d) | 2027-08-14 → 2027-05-17 (-89d) | 95d → 171.3d |
| 14 | **Road 14** | 2027-06-30 → 2027-03-30 (-92d) | 2027-08-17 → 2027-05-18 (-91d) |  |
| 2 | **Trees/ Palms** | 2027-06-30 → 2027-03-30 (-92d) | 2027-07-24 → 2027-04-24 (-91d) |  |

| ID | Task | Start | Finish | Total float |
| --- | --- | --- | --- | --- |
| A61820 | Roadside tree - Cordia sebestena | 2027-06-30 → 2027-03-30 (-92d) | 2027-07-24 → 2027-04-24 (-91d) | 113d → 191.3d |
| A61830 | Roadside tree - Parkinsonia aculeata | 2027-06-30 → 2027-03-30 (-92d) | 2027-07-24 → 2027-04-24 (-91d) | 113d → 191.3d |
| A61840 | Roadside tree - Dalbergia sissoo | 2027-06-30 → 2027-03-30 (-92d) | 2027-07-24 → 2027-04-24 (-91d) | 113d → 191.3d |
| A61850 | Roadside tree - Acacia stenophylla | 2027-06-30 → 2027-03-30 (-92d) | 2027-07-24 → 2027-04-24 (-91d) | 113d → 191.3d |
| A61860 | Roadside tree - Hibiscus tiliaceus | 2027-06-30 → 2027-03-30 (-92d) | 2027-07-24 → 2027-04-24 (-91d) | 113d → 191.3d |
| A61870 | Roadside tree - Azadirachla indica | 2027-06-30 → 2027-03-30 (-92d) | 2027-07-24 → 2027-04-24 (-91d) | 92d → 170.3d |
| 3 | **Miscellaneous Landscaping Items** | 2027-07-03 → 2027-04-01 (-93d) | 2027-07-26 → 2027-04-26 (-91d) |  |
| A61880 | Install Precast concrete block paving for sidewalk, mixed grey colour | 2027-07-03 → 2027-04-01 (-93d) | 2027-07-26 → 2027-04-26 (-91d) | 111d → 189.3d |
| A61890 | Install Precast concrete block paving for main intrsection, colour light grey | 2027-07-03 → 2027-04-01 (-93d) | 2027-07-26 → 2027-04-26 (-91d) | 111d → 189.3d |
| A61900 | install Precast concrete block paving for main intrsection, colour mid grey | 2027-07-03 → 2027-04-01 (-93d) | 2027-07-26 → 2027-04-26 (-91d) | 111d → 189.3d |
| A61910 | install Precast concrete block paving for main intrsection, colour dark grey | 2027-07-03 → 2027-04-01 (-93d) | 2027-07-26 → 2027-04-26 (-91d) | 111d → 189.3d |
| A61920 | Gravel, mixed dark beige + medium beige + light beige | 2027-07-03 → 2027-04-01 (-93d) | 2027-07-26 → 2027-04-26 (-91d) | 111d → 189.3d |
| A61930 | Concrete heel kerb | 2027-07-03 → 2027-04-01 (-93d) | 2027-07-26 → 2027-04-26 (-91d) | 111d → 189.3d |
| 1 | **Ground Cover And Shrubs** | 2027-07-25 → 2027-04-24 (-92d) | 2027-08-17 → 2027-05-18 (-91d) |  |
| A61780 | Lantana montevidensis | 2027-07-25 → 2027-04-24 (-92d) | 2027-08-17 → 2027-05-18 (-91d) | 92d → 170.3d |
| A61790 | Portulaca grandiflora | 2027-07-25 → 2027-04-24 (-92d) | 2027-08-17 → 2027-05-18 (-91d) | 92d → 170.3d |
| A61800 | Dodonaea viscosa | 2027-07-25 → 2027-04-24 (-92d) | 2027-08-17 → 2027-05-18 (-91d) | 92d → 170.3d |
| A61810 | Atriplex halimus | 2027-07-25 → 2027-04-24 (-92d) | 2027-08-17 → 2027-05-18 (-91d) | 92d → 170.3d |
| 15 | **Road 15** | 2027-07-04 → 2027-03-31 (-95d) | 2027-08-21 → 2027-05-19 (-94d) |  |
| 2 | **Trees/ Palms** | 2027-07-04 → 2027-03-31 (-95d) | 2027-07-27 → 2027-04-25 (-93d) |  |
| A61980 | Roadside tree - Cordia sebestena | 2027-07-04 → 2027-03-31 (-95d) | 2027-07-27 → 2027-04-25 (-93d) | 110d → 190.3d |
| A61990 | Roadside tree - Parkinsonia aculeata | 2027-07-04 → 2027-03-31 (-95d) | 2027-07-27 → 2027-04-25 (-93d) | 110d → 190.3d |
| A62000 | Roadside tree - Dalbergia sissoo | 2027-07-04 → 2027-03-31 (-95d) | 2027-07-27 → 2027-04-25 (-93d) | 110d → 190.3d |
| A62010 | Roadside tree - Acacia stenophylla | 2027-07-04 → 2027-03-31 (-95d) | 2027-07-27 → 2027-04-25 (-93d) | 110d → 190.3d |
| A62020 | Roadside tree - Hibiscus tiliaceus | 2027-07-04 → 2027-03-31 (-95d) | 2027-07-27 → 2027-04-25 (-93d) | 110d → 190.3d |
| A62030 | Roadside tree - Azadirachla indica | 2027-07-04 → 2027-03-31 (-95d) | 2027-07-27 → 2027-04-25 (-93d) | 89d → 169.3d |
| 3 | **Miscellaneous Landscaping Items** | 2027-07-06 → 2027-04-03 (-94d) | 2027-07-29 → 2027-04-27 (-93d) |  |
| A62040 | Install Precast concrete block paving for sidewalk, mixed grey colour | 2027-07-06 → 2027-04-03 (-94d) | 2027-07-29 → 2027-04-27 (-93d) | 108d → 188.3d |
| A62050 | Install Precast concrete block paving for main intrsection, colour light grey | 2027-07-06 → 2027-04-03 (-94d) | 2027-07-29 → 2027-04-27 (-93d) | 108d → 188.3d |
| A62060 | install Precast concrete block paving for main intrsection, colour mid grey | 2027-07-06 → 2027-04-03 (-94d) | 2027-07-29 → 2027-04-27 (-93d) | 108d → 188.3d |
| A62070 | install Precast concrete block paving for main intrsection, colour dark grey | 2027-07-06 → 2027-04-03 (-94d) | 2027-07-29 → 2027-04-27 (-93d) | 108d → 188.3d |
| A62080 | Gravel, mixed dark beige + medium beige + light beige | 2027-07-06 → 2027-04-03 (-94d) | 2027-07-29 → 2027-04-27 (-93d) | 108d → 188.3d |
| A62090 | Concrete heel kerb | 2027-07-06 → 2027-04-03 (-94d) | 2027-07-29 → 2027-04-27 (-93d) | 108d → 188.3d |
| 1 | **Ground Cover And Shrubs** | 2027-07-28 → 2027-04-25 (-94d) | 2027-08-21 → 2027-05-19 (-94d) |  |
| A61940 | Lantana montevidensis | 2027-07-28 → 2027-04-25 (-94d) | 2027-08-21 → 2027-05-19 (-94d) | 89d → 169.3d |
| A61950 | Portulaca grandiflora | 2027-07-28 → 2027-04-25 (-94d) | 2027-08-21 → 2027-05-19 (-94d) | 89d → 169.3d |
| A61960 | Dodonaea viscosa | 2027-07-28 → 2027-04-25 (-94d) | 2027-08-21 → 2027-05-19 (-94d) | 89d → 169.3d |
| A61970 | Atriplex halimus | 2027-07-28 → 2027-04-25 (-94d) | 2027-08-21 → 2027-05-19 (-94d) | 89d → 169.3d |
| 16 | **Road 16** | 2027-07-06 → 2027-04-01 (-96d) | 2027-08-23 → 2027-05-20 (-95d) |  |
| 2 | **Trees/ Palms** | 2027-07-06 → 2027-04-01 (-96d) | 2027-07-29 → 2027-04-26 (-94d) |  |
| A62140 | Roadside tree - Cordia sebestena | 2027-07-06 → 2027-04-01 (-96d) | 2027-07-29 → 2027-04-26 (-94d) | 108d → 189.3d |
| A62150 | Roadside tree - Parkinsonia aculeata | 2027-07-06 → 2027-04-01 (-96d) | 2027-07-29 → 2027-04-26 (-94d) | 108d → 189.3d |
| A62160 | Roadside tree - Dalbergia sissoo | 2027-07-06 → 2027-04-01 (-96d) | 2027-07-29 → 2027-04-26 (-94d) | 108d → 189.3d |
| A62170 | Roadside tree - Acacia stenophylla | 2027-07-06 → 2027-04-01 (-96d) | 2027-07-29 → 2027-04-26 (-94d) | 108d → 189.3d |
| A62180 | Roadside tree - Hibiscus tiliaceus | 2027-07-06 → 2027-04-01 (-96d) | 2027-07-29 → 2027-04-26 (-94d) | 108d → 189.3d |
| A62190 | Roadside tree - Azadirachla indica | 2027-07-06 → 2027-04-01 (-96d) | 2027-07-29 → 2027-04-26 (-94d) | 87d → 168.3d |
| 3 | **Miscellaneous Landscaping Items** | 2027-07-08 → 2027-04-04 (-95d) | 2027-08-01 → 2027-04-28 (-95d) |  |
| A62200 | Install Precast concrete block paving for sidewalk, mixed grey colour | 2027-07-08 → 2027-04-04 (-95d) | 2027-08-01 → 2027-04-28 (-95d) | 106d → 187.3d |
| A62210 | Install Precast concrete block paving for main intrsection, colour light grey | 2027-07-08 → 2027-04-04 (-95d) | 2027-08-01 → 2027-04-28 (-95d) | 106d → 187.3d |
| A62220 | install Precast concrete block paving for main intrsection, colour mid grey | 2027-07-08 → 2027-04-04 (-95d) | 2027-08-01 → 2027-04-28 (-95d) | 106d → 187.3d |
| A62230 | install Precast concrete block paving for main intrsection, colour dark grey | 2027-07-08 → 2027-04-04 (-95d) | 2027-08-01 → 2027-04-28 (-95d) | 106d → 187.3d |
| A62240 | Gravel, mixed dark beige + medium beige + light beige | 2027-07-08 → 2027-04-04 (-95d) | 2027-08-01 → 2027-04-28 (-95d) | 106d → 187.3d |
| A62250 | Concrete heel kerb | 2027-07-08 → 2027-04-04 (-95d) | 2027-08-01 → 2027-04-28 (-95d) | 106d → 187.3d |
| 1 | **Ground Cover And Shrubs** | 2027-07-31 → 2027-04-26 (-96d) | 2027-08-23 → 2027-05-20 (-95d) |  |
| A62100 | Lantana montevidensis | 2027-07-31 → 2027-04-26 (-96d) | 2027-08-23 → 2027-05-20 (-95d) | 87d → 168.3d |
| A62110 | Portulaca grandiflora | 2027-07-31 → 2027-04-26 (-96d) | 2027-08-23 → 2027-05-20 (-95d) | 87d → 168.3d |
| A62120 | Dodonaea viscosa | 2027-07-31 → 2027-04-26 (-96d) | 2027-08-23 → 2027-05-20 (-95d) | 87d → 168.3d |
| A62130 | Atriplex halimus | 2027-07-31 → 2027-04-26 (-96d) | 2027-08-23 → 2027-05-20 (-95d) | 87d → 168.3d |
| 17 | **Road 17** | 2027-07-08 → 2027-04-07 (-92d) | 2027-08-28 → 2027-05-29 (-91d) |  |
| 2 | **Trees/ Palms** | 2027-07-08 → 2027-04-07 (-92d) | 2027-08-03 → 2027-05-04 (-91d) |  |
| A62300 | Roadside tree - Cordia sebestena | 2027-07-08 → 2027-04-07 (-92d) | 2027-08-01 → 2027-05-02 (-91d) | 106d → 184.3d |
| A62310 | Roadside tree - Parkinsonia aculeata | 2027-07-08 → 2027-04-07 (-92d) | 2027-08-01 → 2027-05-02 (-91d) | 106d → 184.3d |
| A62320 | Roadside tree - Dalbergia sissoo | 2027-07-08 → 2027-04-07 (-92d) | 2027-08-01 → 2027-05-02 (-91d) | 106d → 184.3d |
| A62330 | Roadside tree - Acacia stenophylla | 2027-07-08 → 2027-04-07 (-92d) | 2027-08-01 → 2027-05-02 (-91d) | 106d → 184.3d |
| A62340 | Roadside tree - Hibiscus tiliaceus | 2027-07-08 → 2027-04-07 (-92d) | 2027-08-01 → 2027-05-02 (-91d) | 106d → 184.3d |
| A62350 | Roadside tree - Azadirachla indica | 2027-07-11 → 2027-04-10 (-92d) | 2027-08-03 → 2027-05-04 (-91d) | 83d → 161.3d |
| 3 | **Miscellaneous Landscaping Items** | 2027-07-11 → 2027-04-10 (-92d) | 2027-08-03 → 2027-05-04 (-91d) |  |
| A62360 | Install Precast concrete block paving for sidewalk, mixed grey colour | 2027-07-11 → 2027-04-10 (-92d) | 2027-08-03 → 2027-05-04 (-91d) | 104d → 182.3d |
| A62370 | Install Precast concrete block paving for main intrsection, colour light grey | 2027-07-11 → 2027-04-10 (-92d) | 2027-08-03 → 2027-05-04 (-91d) | 104d → 182.3d |
| A62380 | install Precast concrete block paving for main intrsection, colour mid grey | 2027-07-11 → 2027-04-10 (-92d) | 2027-08-03 → 2027-05-04 (-91d) | 104d → 182.3d |

| ID | Task | Start | Finish | Complete | Total float |
| --- | --- | --- | --- | --- | --- |
| A62390 | install Precast concrete block paving for main intrsection, colour dark grey | 2027-07-11 → 2027-04-10 (-92d) | 2027-08-03 → 2027-05-04 (-91d) |  | 104d → 182.3d |
| A62400 | Gravel, mixed dark beige + medium beige + light beige | 2027-07-11 → 2027-04-10 (-92d) | 2027-08-03 → 2027-05-04 (-91d) |  | 104d → 182.3d |
| A62410 | Concrete heel kerb | 2027-07-11 → 2027-04-10 (-92d) | 2027-08-03 → 2027-05-04 (-91d) |  | 104d → 182.3d |
| 1 | **Ground Cover And Shrubs** | 2027-08-04 → 2027-05-04 (-92d) | 2027-08-28 → 2027-05-29 (-91d) |  |  |
| A62260 | Lantana montevidensis | 2027-08-04 → 2027-05-04 (-92d) | 2027-08-28 → 2027-05-29 (-91d) |  | 83d → 161.3d |
| A62270 | Portulaca grandiflora | 2027-08-04 → 2027-05-04 (-92d) | 2027-08-28 → 2027-05-29 (-91d) |  | 83d → 161.3d |
| A62280 | Dodonaea viscosa | 2027-08-04 → 2027-05-04 (-92d) | 2027-08-28 → 2027-05-29 (-91d) |  | 83d → 161.3d |
| A62290 | Atriplex halimus | 2027-08-04 → 2027-05-04 (-92d) | 2027-08-28 → 2027-05-29 (-91d) |  | 83d → 161.3d |
| CO1 | **Collector 1** | 2027-08-01 → 2027-04-14 (-109d) | 2027-09-18 → 2027-06-02 (-108d) |  |  |
| 2 | **Trees/ Palms** | 2027-08-01 → 2027-04-14 (-109d) | 2027-08-24 → 2027-05-09 (-107d) |  |  |
| A62460 | Roadside tree - Cordia sebestena | 2027-08-01 → 2027-04-14 (-109d) | 2027-08-24 → 2027-05-09 (-107d) |  | 86d → 178.3d |
| A62470 | Roadside tree - Parkinsonia aculeata | 2027-08-01 → 2027-04-14 (-109d) | 2027-08-24 → 2027-05-09 (-107d) |  | 86d → 178.3d |
| A62480 | Roadside tree - Dalbergia sissoo | 2027-08-01 → 2027-04-14 (-109d) | 2027-08-24 → 2027-05-09 (-107d) |  | 86d → 178.3d |
| A62490 | Roadside tree - Acacia stenophylla | 2027-08-01 → 2027-04-14 (-109d) | 2027-08-24 → 2027-05-09 (-107d) |  | 86d → 178.3d |
| A62500 | Roadside tree - Hibiscus tiliaceus | 2027-08-01 → 2027-04-14 (-109d) | 2027-08-24 → 2027-05-09 (-107d) |  | 86d → 178.3d |
| A62510 | Roadside tree - Azadirachla indica | 2027-08-01 → 2027-04-14 (-109d) | 2027-08-24 → 2027-05-09 (-107d) |  | 65d → 157.3d |
| 3 | **Miscellaneous Landscaping Items** | 2027-08-05 → 2027-04-19 (-108d) | 2027-08-29 → 2027-05-13 (-108d) |  |  |
| A62520 | Install Precast concrete block paving for sidewalk, mixed grey colour | 2027-08-05 → 2027-04-19 (-108d) | 2027-08-29 → 2027-05-13 (-108d) |  | 82d → 174.3d |
| A62530 | Install Precast concrete block paving for main intrsection, colour light grey | 2027-08-05 → 2027-04-19 (-108d) | 2027-08-29 → 2027-05-13 (-108d) |  | 82d → 174.3d |
| A62540 | install Precast concrete block paving for main intrsection, colour mid grey | 2027-08-05 → 2027-04-19 (-108d) | 2027-08-29 → 2027-05-13 (-108d) |  | 82d → 174.3d |
| A62550 | install Precast concrete block paving for main intrsection, colour dark grey | 2027-08-05 → 2027-04-19 (-108d) | 2027-08-29 → 2027-05-13 (-108d) |  | 82d → 174.3d |
| A62560 | Gravel, mixed dark beige + medium beige + light beige | 2027-08-05 → 2027-04-19 (-108d) | 2027-08-29 → 2027-05-13 (-108d) |  | 82d → 174.3d |
| A62570 | Concrete heel kerb | 2027-08-05 → 2027-04-19 (-108d) | 2027-08-29 → 2027-05-13 (-108d) |  | 82d → 174.3d |
| 1 | **Ground Cover And Shrubs** | 2027-08-25 → 2027-05-09 (-108d) | 2027-09-18 → 2027-06-02 (-108d) |  |  |
| A62420 | Lantana montevidensis | 2027-08-25 → 2027-05-09 (-108d) | 2027-09-18 → 2027-06-02 (-108d) |  | 65d → 157.3d |
| A62430 | Portulaca grandiflora | 2027-08-25 → 2027-05-09 (-108d) | 2027-09-18 → 2027-06-02 (-108d) |  | 65d → 157.3d |
| A62440 | Dodonaea viscosa | 2027-08-25 → 2027-05-09 (-108d) | 2027-09-18 → 2027-06-02 (-108d) |  | 65d → 157.3d |
| A62450 | Atriplex halimus | 2027-08-25 → 2027-05-09 (-108d) | 2027-09-18 → 2027-06-02 (-108d) |  | 65d → 157.3d |
| Zone B | **Zone B** |  | 2027-12-01 → 2027-10-07 (-55d) |  |  |
| PREP | **EARTH WORK** |  | 2026-04-02 → 2026-10-19 (+200d) |  |  |
| R18 | **Road 18** |  | 2026-01-28 → 2026-09-20 (+235d) |  |  |
| EW | **Earth Work** |  | 2026-01-28 → 2026-09-20 (+235d) |  |  |
| A62720 | Earthworks - Cut Excavation | 2026-01-03 A | 2026-01-06 → 2026-09-20 A (+257d) | 0% → 100% | 0d → none |
| A62730 | Earthworks - Fill & Compaction | 2026-01-07 → 2026-08-15 A (+220d) | 2026-01-22 → 2026-09-20 A (+241d) | 0% → 100% | 125d → none |
| A62740 | Subgrade | 2026-01-24 → 2026-08-15 A (+203d) | 2026-01-28 → 2026-09-20 A (+235d) | 0% → 100% | 154d → none |
| R19 | **Road 19** |  | 2026-01-28 → 2026-09-20 (+235d) |  |  |
| EW | **Earth Work** |  | 2026-01-28 → 2026-09-20 (+235d) |  |  |
| A64350 | Earthworks - Cut Excavation | 2026-01-07 A | 2026-01-11 → 2026-09-20 A (+252d) | 0% → 100% | 0d → none |
| A64360 | Earthworks - Fill & Compaction | 2026-01-12 → 2026-08-15 A (+215d) | 2026-01-22 → 2026-09-20 A (+241d) | 0% → 100% | 157d → none |
| A64370 | Subgrade | 2026-01-24 → 2026-08-15 A (+203d) | 2026-01-28 → 2026-09-20 A (+235d) | 0% → 100% | 157d → none |
| R20 | **Road 20** |  | 2026-01-27 → 2026-09-20 (+236d) |  |  |
| EW | **Earth Work** |  | 2026-01-27 → 2026-09-20 (+236d) |  |  |
| A64380 | Earthworks - Cut Excavation | 2026-01-12 A | 2026-01-15 → 2026-09-20 A (+248d) | 0% → 100% | 0d → none |
| A64390 | Earthworks - Fill & Compaction | 2026-01-17 → 2026-08-15 A (+210d) | 2026-01-21 → 2026-09-20 A (+242d) | 0% → 100% | 162d → none |
| A64400 | Subgrade | 2026-01-22 → 2026-08-15 A (+205d) | 2026-01-27 → 2026-09-20 A (+236d) | 0% → 100% | 162d → none |
| R21 | **Road 21** |  | 2026-02-01 → 2026-10-03 (+244d) |  |  |
| EW | **Earth Work** |  | 2026-02-01 → 2026-10-03 (+244d) |  |  |
| A64410 | Earthworks - Cut Excavation | 2026-01-17 A | 2026-01-20 → 2026-09-20 A (+243d) | 0% → 100% | 0d → none |
| A64420 | Earthworks - Fill & Compaction | 2026-01-21 → 2026-08-15 A (+206d) | 2026-01-26 → 2026-09-20 A (+237d) | 0% → 100% | 161d → none |
| A64430 | Subgrade | 2026-01-27 → 2026-08-29 A (+214d) | 2026-02-01 → 2026-10-03 (+244d) | 0% → 98% | 161d → -13.12d |
| R22 | **Road 22** |  | 2026-02-05 → 2026-10-03 (+240d) |  |  |
| EW | **Earth Work** |  | 2026-02-05 → 2026-10-03 (+240d) |  |  |
| A64440 | Earthworks - Cut Excavation | 2026-01-21 A | 2026-01-25 → 2026-09-20 A (+238d) | 0% → 100% | 0d → none |
| A64450 | Earthworks - Fill & Compaction | 2026-01-26 → 2026-08-15 A (+201d) | 2026-01-31 → 2026-09-20 A (+232d) | 0% → 100% | 132d → none |
| A64460 | Subgrade | 2026-02-01 → 2026-08-29 A (+209d) | 2026-02-05 → 2026-10-03 (+240d) | 0% → 95% | 160d → -13.21d |
| R23 | **Road 23** |  | 2026-02-10 → 2026-10-03 (+235d) |  |  |
| EW | **Earth Work** |  | 2026-02-10 → 2026-10-03 (+235d) |  |  |
| A64470 | Earthworks - Cut Excavation | 2026-01-26 A | 2026-01-29 → 2026-09-20 A (+234d) | 0% → 100% | 0d → none |
| A64480 | Earthworks - Fill & Compaction | 2026-01-31 → 2026-08-15 A (+196d) | 2026-02-04 → 2026-09-20 A (+228d) | 0% → 100% | 142d → none |
| A64490 | Subgrade | 2026-02-05 → 2026-08-29 A (+205d) | 2026-02-10 → 2026-10-03 (+235d) | 0% → 95% | 159d → -13.15d |
| R24 | **Road 24** |  | 2026-02-15 → 2026-10-03 (+230d) |  |  |
| EW | **Earth Work** |  | 2026-02-15 → 2026-10-03 (+230d) |  |  |
| A64500 | Earthworks - Cut Excavation | 2026-01-31 A | 2026-02-03 → 2026-09-20 A (+229d) | 0% → 100% | 0d → none |
| A64510 | Earthworks - Fill & Compaction | 2026-02-04 → 2026-08-15 A (+192d) | 2026-02-09 → 2026-09-20 A (+223d) | 0% → 100% | 106d → none |
| A64520 | Subgrade | 2026-02-10 → 2026-08-29 A (+200d) | 2026-02-15 → 2026-10-03 (+230d) | 0% → 95% | 158d → -13.09d |
| R25 | **Road 25** |  | 2026-02-19 → 2026-09-20 (+213d) |  |  |
| EW | **Earth Work** |  | 2026-02-19 → 2026-09-20 (+213d) |  |  |
| A64530 | Earthworks - Cut Excavation | 2026-02-04 A | 2026-02-08 → 2026-09-20 A (+224d) | 0% → 100% | 0d → none |
| A64540 | Earthworks - Fill & Compaction | 2026-02-09 → 2026-08-15 A (+187d) | 2026-02-14 → 2026-09-20 A (+218d) | 0% → 100% | 0d → none |
| A64550 | Subgrade | 2026-02-15 → 2026-08-15 A (+181d) | 2026-02-19 → 2026-09-20 A (+213d) | 0% → 100% | 157d → none |

| ID | Task | Start | Finish | Complete | Total float | Predecessors |
| --- | --- | --- | --- | --- | --- | --- |
| R26 | **Road 26** |  | 2026-02-24 → 2026-10-04 (+222d) |  |  |  |
| EW | **Earth Work** |  | 2026-02-24 → 2026-10-04 (+222d) |  |  |  |
| A66630 | Earthworks - Cut Excavation | 2026-02-09 A | 2026-02-12 → 2026-09-28 A (+228d) | 0% → 100% | 5d → none |  |
| A66640 | Earthworks - Fill & Compaction | 2026-02-14 → 2026-09-05 A (+203d) | 2026-02-18 → 2026-10-03 (+227d) | 0% → 83% | 69d → -14.45d |  |
| A66650 | Subgrade | 2026-02-19 → 2026-09-05 A (+198d) | 2026-02-24 → 2026-10-04 (+222d) | 0% → 83% | 156d → -14.45d |  |
| R27 | **Road 27** |  | 2026-02-28 → 2026-10-03 (+217d) |  |  |  |
| EW | **Earth Work** |  | 2026-02-28 → 2026-10-03 (+217d) |  |  |  |
| A66660 | Earthworks - Cut Excavation | 2026-02-14 A | 2026-02-17 → 2026-09-28 A (+223d) | 0% → 100% | 5d → none |  |
| A66670 | Earthworks - Fill & Compaction | 2026-02-18 → 2026-09-05 A (+199d) | 2026-02-22 → 2026-10-03 (+223d) | 0% → 95% | 5d → -79.2d |  |
| A66680 | Subgrade | 2026-02-23 → 2026-09-05 A (+194d) | 2026-02-28 → 2026-10-03 (+217d) | 0% → 95% | 156d → -10.8d |  |
| CO2 | **Collector 2** |  | 2026-03-15 → 2026-10-03 (+202d) |  |  |  |
| EW | **Earth Work** |  | 2026-03-15 → 2026-10-03 (+202d) |  |  |  |
| A64560 | Earthworks - Cut Excavation | 2026-02-18 A | 2026-02-26 → 2026-09-20 A (+206d) | 0% → 100% | 49d → none |  |
| A64570 | Earthworks - Fill & Compaction | 2026-02-28 → 2026-08-29 A (+182d) | 2026-03-08 → 2026-10-03 (+209d) | 0% → 95% | 49d → -10.9d |  |
| A64580 | Subgrade | 2026-03-09 → 2026-08-29 A (+173d) | 2026-03-15 → 2026-10-03 (+202d) | 0% → 95% | 146d → -10.9d |  |
| AR1 | **Areterial 1** |  | 2026-03-16 → 2026-09-20 (+188d) |  |  |  |
| EW | **Earth Work** |  | 2026-03-16 → 2026-09-20 (+188d) |  |  |  |
| A64590 | Earthworks - Cut Excavation | 2026-02-28 A | 2026-03-04 → 2026-09-20 A (+200d) | 0% → 100% | 80d → none |  |
| A64600 | Earthworks - Fill & Compaction | 2026-03-05 → 2026-08-15 A (+163d) | 2026-03-10 → 2026-09-20 A (+194d) | 0% → 100% | 89d → none |  |
| A64610 | Subgrade | 2026-03-11 → 2026-08-15 A (+157d) | 2026-03-16 → 2026-09-20 A (+188d) | 0% → 100% | 162d → none |  |
| AR2 | **Areterial 2** |  | 2026-03-22 → 2026-09-20 (+182d) |  |  |  |
| EW | **Earth Work** |  | 2026-03-22 → 2026-09-20 (+182d) |  |  |  |
| A64620 | Earthworks - Cut Excavation | 2026-03-05 A | 2026-03-10 → 2026-09-20 A (+194d) | 0% → 100% | 80d → none |  |
| A64630 | Earthworks - Fill & Compaction | 2026-03-11 → 2026-08-15 A (+157d) | 2026-03-16 → 2026-09-20 A (+188d) | 0% → 100% | 80d → none |  |
| A64640 | Subgrade | 2026-03-17 → 2026-08-15 A (+151d) | 2026-03-22 → 2026-09-20 A (+182d) | 0% → 100% | 162d → none |  |
| AR21 | **ROUND ABOUT 1** | 2026-03-11 → 2026-03-15 (+4d) | 2026-03-28 → 2026-10-13 (+199d) |  |  |  |
| EW | **Earth Work** | 2026-03-11 → 2026-03-15 (+4d) | 2026-03-28 → 2026-10-13 (+199d) |  |  |  |
| A66690 | Earthworks - Cut Excavation | 2026-03-11 → 2026-03-15 A (+4d) | 2026-03-16 → 2026-09-28 A (+196d) | 0% → 100% | 156d → none |  |
| A66700 | Earthworks - Fill & Compaction | 2026-03-17 → 2026-10-03 (+200d) | 2026-03-22 → 2026-10-07 (+199d) |  | 156d → -15d |  |
| A66710 | Subgrade | 2026-03-23 → 2026-10-08 (+199d) | 2026-03-28 → 2026-10-13 (+199d) |  | 156d → -15d |  |
| AR211 | **ROUND ABOUT 2** | 2026-03-17 → 2026-03-15 (-2d) | 2026-04-02 → 2026-10-19 (+200d) |  |  |  |
| EW | **Earth Work** | 2026-03-17 → 2026-03-15 (-2d) | 2026-04-02 → 2026-10-19 (+200d) |  |  |  |
| A66720 | Earthworks - Cut Excavation | 2026-03-17 → 2026-03-15 A (-2d) | 2026-03-22 → 2026-09-28 A (+190d) | 0% → 100% | 156d → none |  |
| A66730 | Earthworks - Fill & Compaction | 2026-03-23 → 2026-10-03 (+194d) | 2026-03-28 → 2026-10-07 (+193d) |  | 156d → -10d |  |
| A66740 | Subgrade | 2026-03-29 → 2026-10-14 (+199d) | 2026-04-02 → 2026-10-19 (+200d) |  | 156d → -15d |  |
| 2 | **STORM NETWORK** | 2026-01-22 → 2026-08-20 (+210d) | 2027-01-12 → 2027-05-02 (+110d) |  |  |  |
| EX LR 01 | **EX LR 01** | 2026-03-28 → 2026-08-20 (+145d) | 2026-11-21 → 2026-09-28 (-54d) |  |  |  |
| MH-A31 /MH-A32 | **MH-A31 /MH-A32** | 2026-03-28 → 2026-08-20 (+145d) | 2026-08-22 → 2026-09-28 (+37d) |  |  |  |
| A79580 | Excavation | 2026-03-28 → 2026-08-20 A (+145d) | 2026-03-31 → 2026-09-28 A (+181d) | 0% → 100% | 5d → none |  |
| A79590 | Pipe Laying | 2026-07-15 → 2026-08-20 A (+36d) | 2026-08-08 → 2026-09-28 A (+51d) | 0% → 100% | 2d → none |  |
| A79600 | Install Manhole | 2026-04-26 → 2026-08-20 A (+116d) | 2026-04-29 → 2026-09-28 A (+152d) | 0% → 100% | 90d → none | A79580, A10240 → A79580 |
| A79610 | Testing & Inspection | 2026-08-09 → 2026-08-20 A (+11d) | 2026-08-10 → 2026-09-28 A (+49d) | 0% → 100% | 2d → none |  |
| A79620 | Backfilling & Compaction | 2026-08-11 → 2026-08-20 A (+9d) | 2026-08-22 → 2026-09-28 A (+37d) | 0% → 100% | 2d → none |  |
| MH-A32 /MH-A33 | **MH-A32 /MH-A33** | 2026-08-23 → 2026-08-20 (-3d) | 2026-10-04 → 2026-09-28 (-6d) |  |  |  |
| A81680 | Excavation | 2026-08-23 → 2026-08-20 A (-3d) | 2026-08-26 → 2026-09-28 A (+33d) | 0% → 100% | 2d → none |  |
| A81690 | Pipe Laying | 2026-08-27 → 2026-08-20 A (-7d) | 2026-09-20 → 2026-09-28 A (+8d) | 0% → 100% | 45d → none |  |
| A81700 | Install Manhole | 2026-08-27 → 2026-08-20 A (-7d) | 2026-08-31 → 2026-09-28 A (+28d) | 0% → 100% | 64d → none | A81680, A10240 → A81680 |
| A81710 | Testing & Inspection | 2026-09-21 → 2026-08-20 A (-32d) | 2026-09-22 → 2026-09-28 A (+6d) | 0% → 100% | 45d → none |  |
| A81720 | Backfilling & Compaction | 2026-09-23 → 2026-08-20 A (-34d) | 2026-10-04 → 2026-09-28 A (-6d) | 0% → 100% | 45d → none |  |
| MH-A33 /MH-A34 | **MH-A33 /MH-A34** | 2026-10-05 → 2026-08-20 (-46d) | 2026-11-16 → 2026-09-28 (-49d) |  |  |  |
| A81630 | Excavation | 2026-10-05 → 2026-08-20 A (-46d) | 2026-10-08 → 2026-09-28 A (-10d) | 0% → 100% | 45d → none |  |
| A81640 | Pipe Laying | 2026-10-10 → 2026-08-20 A (-51d) | 2026-11-02 → 2026-09-28 A (-35d) | 0% → 100% | 45d → none |  |
| A81650 | Install Manhole | 2026-10-10 → 2026-08-20 A (-51d) | 2026-10-13 → 2026-09-28 A (-15d) | 0% → 100% | 64d → none | A81630, A10240 → A81630 |
| A81660 | Testing & Inspection | 2026-11-03 → 2026-08-20 A (-75d) | 2026-11-04 → 2026-09-28 A (-37d) | 0% → 100% | 45d → none |  |
| A81670 | Backfilling & Compaction | 2026-11-05 → 2026-08-20 A (-77d) | 2026-11-16 → 2026-09-28 A (-49d) | 0% → 100% | 45d → none |  |
| MH-A34 /MH-A35 | **MH-A34 /MH-A35** | 2026-10-10 → 2026-08-20 (-51d) | 2026-11-21 → 2026-09-28 (-54d) |  |  |  |
| A81580 | Excavation | 2026-10-10 → 2026-08-20 A (-51d) | 2026-10-13 → 2026-09-28 A (-15d) | 0% → 100% | 51d → none |  |
| A81590 | Pipe Laying | 2026-10-14 → 2026-08-20 A (-55d) | 2026-11-07 → 2026-09-28 A (-40d) | 0% → 100% | 51d → none |  |
| A81600 | Install Manhole | 2026-10-14 → 2026-08-20 A (-55d) | 2026-10-18 → 2026-09-28 A (-20d) | 0% → 100% | 70d → none | A81580, A10240 → A81580 |
| A81610 | Testing & Inspection | 2026-11-08 → 2026-08-20 A (-80d) | 2026-11-09 → 2026-09-28 A (-42d) | 0% → 100% | 51d → none |  |
| A81620 | Backfilling & Compaction | 2026-11-17 → 2026-08-20 A (-89d) | 2026-11-21 → 2026-09-28 A (-54d) | 0% → 100% | 45d → none |  |
| A R R-1 | **A R R-1** | 2026-03-11 → 2026-08-20 (+162d) | 2027-01-10 → 2027-01-23 (+13d) |  |  |  |
| MH-0-Q /MH-11-Q | **MH-0-Q /MH-11-Q** | 2026-03-11 → 2026-10-03 (+206d) | 2026-05-11 → 2026-10-25 (+167d) |  |  |  |
| A68030 | Excavation | 2026-03-11 → 2026-10-03 (+206d) | 2026-03-15 → 2026-10-06 (+205d) |  | 89d → -11d |  |
| A68040 | Pipe Laying | 2026-03-16 → 2026-10-07 (+205d) | 2026-03-19 → 2026-10-11 (+206d) |  | 89d → -11d |  |
| A68050 | Install Manhole | 2026-04-26 → 2026-10-07 (+164d) | 2026-04-29 → 2026-10-11 (+165d) |  | 56d → -9d | A68030, A10240 → A68030 |
| A68060 | Testing & Inspection | 2026-03-21 → 2026-10-12 (+205d) | 2026-03-22 → 2026-10-13 (+205d) |  | 89d → -11d |  |
| A68070 | Backfilling & Compaction | 2026-04-30 → 2026-10-14 (+167d) | 2026-05-11 → 2026-10-25 (+167d) |  | 56d → -11d |  |
| MH-11-Q /MH-11-Q-1 | **MH-11-Q /MH-11-Q-1** | 2026-08-27 → 2026-12-10 (+105d) | 2026-10-08 → 2027-01-23 (+107d) |  |  |  |
| A67980 | Excavation | 2026-08-27 → 2026-12-10 (+105d) | 2026-08-31 → 2026-12-15 (+106d) |  | 2d → 5.68d |  |

| ID | Task | Start | Finish | Complete | Total float | Predecessors |
| --- | --- | --- | --- | --- | --- | --- |
| A67990 | Pipe Laying | 2026-09-01 → 2026-12-15 (+105d) | 2026-09-24 → 2027-01-09 (+107d) |  | 2d → 5.68d |  |
| A68000 | Install Manhole | 2026-09-01 → 2026-12-15 (+105d) | 2026-09-05 → 2026-12-20 (+106d) |  | 21d → 24.68d | A67980, A10240 → A67980 |
| A68010 | Testing & Inspection | 2026-09-26 → 2027-01-09 (+105d) | 2026-09-27 → 2027-01-11 (+106d) |  | 2d → 5.68d |  |
| A68020 | Backfilling & Compaction | 2026-09-28 → 2027-01-11 (+105d) | 2026-10-08 → 2027-01-23 (+107d) |  | 2d → 5.68d |  |
| MH-11-Q-1 /MH-11-Q-2 | **MH-11-Q-1 /MH-11-Q-2** | 2026-09-01 → 2026-08-20 (-12d) | 2026-10-20 → 2026-09-28 (-22d) |  |  |  |
| A67930 | Excavation | 2026-09-01 → 2026-08-20 A (-12d) | 2026-09-05 → 2026-09-28 A (+23d) | 0% → 100% | 8d → none |  |
| A67940 | Pipe Laying | 2026-09-06 → 2026-08-20 A (-17d) | 2026-09-29 → 2026-09-28 A (-1d) | 0% → 100% | 8d → none |  |
| A67950 | Install Manhole | 2026-09-06 → 2026-08-20 A (-17d) | 2026-09-09 → 2026-09-28 A (+19d) | 0% → 100% | 27d → none | A67930, A10240 → A67930 |
| A67960 | Testing & Inspection | 2026-09-30 → 2026-08-20 A (-41d) | 2026-10-01 → 2026-09-28 A (-3d) | 0% → 100% | 8d → none |  |
| A67970 | Backfilling & Compaction | 2026-10-10 → 2026-08-20 A (-51d) | 2026-10-20 → 2026-09-28 A (-22d) | 0% → 100% | 2d → none |  |
| MH-11-Q-2 /MH-11-Q-3 | **MH-11-Q-2 /MH-11-Q-3** | 2026-09-06 → 2026-08-20 (-17d) | 2026-11-01 → 2026-09-28 (-34d) |  |  |  |
| A67880 | Excavation | 2026-09-06 → 2026-08-20 A (-17d) | 2026-09-09 → 2026-09-28 A (+19d) | 0% → 100% | 14d → none |  |
| A67890 | Pipe Laying | 2026-09-10 → 2026-08-20 A (-21d) | 2026-10-04 → 2026-09-28 A (-6d) | 0% → 100% | 14d → none |  |
| A67900 | Install Manhole | 2026-09-10 → 2026-08-20 A (-21d) | 2026-09-14 → 2026-09-28 A (+14d) | 0% → 100% | 33d → none | A67880, A10240 → A67880 |
| A67910 | Testing & Inspection | 2026-10-05 → 2026-08-20 A (-46d) | 2026-10-06 → 2026-09-28 A (-8d) | 0% → 100% | 14d → none |  |
| A67920 | Backfilling & Compaction | 2026-10-21 → 2026-08-20 A (-62d) | 2026-11-01 → 2026-09-28 A (-34d) | 0% → 100% | 2d → none |  |
| MH-11-Q-3 /MH-11-Q-4 | **MH-11-Q-3 /MH-11-Q-4** | 2026-09-10 → 2026-08-20 (-21d) | 2026-11-12 → 2026-09-28 (-45d) |  |  |  |
| A67830 | Excavation | 2026-09-10 → 2026-08-20 A (-21d) | 2026-09-14 → 2026-09-28 A (+14d) | 0% → 100% | 20d → none |  |
| A67840 | Pipe Laying | 2026-09-15 → 2026-08-20 A (-26d) | 2026-10-08 → 2026-09-28 A (-10d) | 0% → 100% | 20d → none |  |
| A67850 | Install Manhole | 2026-09-15 → 2026-08-20 A (-26d) | 2026-09-19 → 2026-09-28 A (+9d) | 0% → 100% | 39d → none | A67830, A10240 → A67830 |
| A67860 | Testing & Inspection | 2026-10-10 → 2026-08-20 A (-51d) | 2026-10-11 → 2026-09-28 A (-13d) | 0% → 100% | 20d → none |  |
| A67870 | Backfilling & Compaction | 2026-11-02 → 2026-08-20 A (-74d) | 2026-11-12 → 2026-09-28 A (-45d) | 0% → 100% | 2d → none |  |
| MH-11-Q-4 /MH-11-Q-5 | **MH-11-Q-4 /MH-11-Q-5** | 2026-09-15 → 2026-08-20 (-26d) | 2026-11-24 → 2026-09-28 (-57d) |  |  |  |
| A67780 | Excavation | 2026-09-15 → 2026-08-20 A (-26d) | 2026-09-19 → 2026-09-28 A (+9d) | 0% → 100% | 26d → none |  |
| A67790 | Pipe Laying | 2026-09-20 → 2026-08-20 A (-31d) | 2026-10-13 → 2026-09-28 A (-15d) | 0% → 100% | 26d → none |  |
| A67800 | Install Manhole | 2026-09-20 → 2026-08-20 A (-31d) | 2026-09-23 → 2026-09-28 A (+5d) | 0% → 100% | 45d → none | A67780, A10240 → A67780 |
| A67810 | Testing & Inspection | 2026-10-14 → 2026-08-20 A (-55d) | 2026-10-15 → 2026-09-28 A (-17d) | 0% → 100% | 26d → none |  |
| A67820 | Backfilling & Compaction | 2026-11-14 → 2026-08-20 A (-86d) | 2026-11-24 → 2026-09-28 A (-57d) | 0% → 100% | 2d → none |  |
| MH-11-Q-5 /MH-11-Q-6 | **MH-11-Q-5 /MH-11-Q-6** | 2026-09-20 → 2026-08-20 (-31d) | 2026-12-06 → 2026-09-28 (-69d) |  |  |  |
| A67730 | Excavation | 2026-09-20 → 2026-08-20 A (-31d) | 2026-09-23 → 2026-09-28 A (+5d) | 0% → 100% | 32d → none |  |
| A67740 | Pipe Laying | 2026-09-24 → 2026-08-20 A (-35d) | 2026-10-18 → 2026-09-28 A (-20d) | 0% → 100% | 32d → none |  |
| A67750 | Install Manhole | 2026-09-24 → 2026-08-20 A (-35d) | 2026-09-28 A | 0% → 100% | 51d → none | A67730, A10240 → A67730 |
| A67760 | Testing & Inspection | 2026-10-19 → 2026-08-20 A (-60d) | 2026-10-20 → 2026-09-28 A (-22d) | 0% → 100% | 32d → none |  |
| A67770 | Backfilling & Compaction | 2026-11-25 → 2026-08-20 A (-97d) | 2026-12-06 → 2026-09-28 A (-69d) | 0% → 100% | 2d → none |  |
| MH-11-Q-6 /MH-11-Q-7 | **MH-11-Q-6 /MH-11-Q-7** | 2026-09-24 → 2026-08-20 (-35d) | 2026-12-17 → 2026-09-28 (-80d) |  |  |  |
| A67680 | Excavation | 2026-09-24 → 2026-08-20 A (-35d) | 2026-09-28 A | 0% → 100% | 38d → none |  |
| A67690 | Pipe Laying | 2026-09-29 → 2026-08-20 A (-40d) | 2026-10-22 → 2026-09-28 A (-24d) | 0% → 100% | 38d → none |  |
| A67700 | Install Manhole | 2026-09-29 → 2026-08-20 A (-40d) | 2026-10-03 → 2026-09-28 A (-5d) | 0% → 100% | 57d → none | A67680, A10240 → A67680 |
| A67710 | Testing & Inspection | 2026-10-24 → 2026-08-20 A (-65d) | 2026-10-25 → 2026-09-28 A (-27d) | 0% → 100% | 38d → none |  |
| A67720 | Backfilling & Compaction | 2026-12-07 → 2026-08-20 A (-109d) | 2026-12-17 → 2026-09-28 A (-80d) | 0% → 100% | 2d → none |  |
| MH-11-Q-7 /MH-11-Q-8 | **MH-11-Q-7 /MH-11-Q-8** | 2026-09-29 → 2026-08-20 (-40d) | 2026-12-29 → 2026-09-28 (-92d) |  |  |  |
| A67630 | Excavation | 2026-09-29 → 2026-08-20 A (-40d) | 2026-10-03 → 2026-09-28 A (-5d) | 0% → 100% | 44d → none |  |
| A67640 | Pipe Laying | 2026-10-04 → 2026-08-20 A (-45d) | 2026-10-27 → 2026-09-28 A (-29d) | 0% → 100% | 44d → none |  |
| A67650 | Install Manhole | 2026-10-04 → 2026-08-20 A (-45d) | 2026-10-07 → 2026-09-28 A (-9d) | 0% → 100% | 63d → none | A67630, A10240 → A67630 |
| A67660 | Testing & Inspection | 2026-10-28 → 2026-08-20 A (-69d) | 2026-10-29 → 2026-09-28 A (-31d) | 0% → 100% | 44d → none |  |
| A67670 | Backfilling & Compaction | 2026-12-19 → 2026-08-20 A (-121d) | 2026-12-29 → 2026-09-28 A (-92d) | 0% → 100% | 2d → none |  |
| MH-11-Q-8 /MH-11-Q-9 | **MH-11-Q-8 /MH-11-Q-9** | 2026-10-04 → 2026-08-20 (-45d) | 2027-01-10 → 2026-09-28 (-104d) |  |  |  |
| A67580 | Excavation | 2026-10-04 → 2026-08-20 A (-45d) | 2026-10-07 → 2026-09-28 A (-9d) | 0% → 100% | 50d → none |  |
| A67590 | Pipe Laying | 2026-10-08 → 2026-08-20 A (-49d) | 2026-11-01 → 2026-09-28 A (-34d) | 0% → 100% | 50d → none |  |
| A67600 | Install Manhole | 2026-10-08 → 2026-08-20 A (-49d) | 2026-10-12 → 2026-09-28 A (-14d) | 0% → 100% | 69d → none | A67580, A10240 → A67580 |
| A67610 | Testing & Inspection | 2026-11-02 → 2026-08-20 A (-74d) | 2026-11-03 → 2026-09-28 A (-36d) | 0% → 100% | 50d → none |  |
| A67620 | Backfilling & Compaction | 2026-12-30 → 2026-08-20 A (-132d) | 2027-01-10 → 2026-09-28 A (-104d) | 0% → 100% | 2d → none |  |
| EX LR 02 | **EX LR 02** | 2026-04-01 → 2026-08-20 (+141d) | 2027-01-12 → 2027-05-02 (+110d) |  |  |  |
| O-A /MH-1A | **O-A /MH-1A** | 2026-04-06 → 2026-08-20 (+136d) | 2026-05-16 → 2026-10-05 (+142d) |  |  |  |
| A81430 | Excavation | 2026-04-06 → 2026-08-20 A (+136d) | 2026-04-09 → 2026-09-28 A (+172d) | 0% → 100% | 8d → none |  |
| A81440 | Pipe Laying | 2026-04-11 → 2026-08-20 A (+131d) | 2026-04-26 → 2026-09-28 A (+155d) | 0% → 100% | 8d → none |  |
| A81450 | Install Manhole | 2026-04-26 → 2026-08-20 A (+116d) | 2026-04-29 → 2026-09-28 A (+152d) | 0% → 100% | 7d → none | A81430, A10240 → A81430 |
| A81470 | Backfilling & Compaction | 2026-05-09 → 2026-09-06 A (+120d) | 2026-05-16 → 2026-09-28 A (+135d) | 0% → 100% | 0d → none |  |
| A81460 | Testing & Inspection | 2026-04-27 → 2026-10-03 (+159d) | 2026-04-28 → 2026-10-05 (+160d) |  | 8d → -79.2d |  |
| MH-1A /MH-2A | **MH-1A /MH-2A** | 2026-04-11 → 2026-08-20 (+131d) | 2026-05-24 → 2026-10-05 (+134d) |  |  |  |
| A81480 | Excavation | 2026-04-11 → 2026-08-20 A (+131d) | 2026-04-14 → 2026-09-28 A (+167d) | 0% → 100% | 11d → none |  |
| A81490 | Pipe Laying | 2026-04-15 → 2026-08-20 A (+127d) | 2026-04-30 → 2026-09-28 A (+151d) | 0% → 100% | 11d → none |  |
| A81500 | Install Manhole | 2026-04-26 → 2026-08-20 A (+116d) | 2026-04-29 → 2026-09-28 A (+152d) | 0% → 100% | 14d → none | A81480, A10240 → A81480 |
| A81520 | Backfilling & Compaction | 2026-05-17 → 2026-09-26 A (+132d) | 2026-05-24 → 2026-10-01 A (+130d) | 0% → 100% | 0d → none |  |
| A81510 | Testing & Inspection | 2026-05-02 → 2026-10-03 (+154d) | 2026-05-03 → 2026-10-05 (+155d) |  | 11d → -79.2d |  |
| MH-2A /MH-3 A | **MH-2A /MH-3 A** | 2026-04-15 → 2026-08-20 (+127d) | 2026-06-01 → 2026-10-05 (+126d) |  |  |  |
| A81530 | Excavation | 2026-04-15 → 2026-08-20 A (+127d) | 2026-04-19 → 2026-09-28 A (+162d) | 0% → 100% | 14d → none |  |
| A81540 | Pipe Laying | 2026-04-20 → 2026-08-20 A (+122d) | 2026-05-05 → 2026-09-28 A (+146d) | 0% → 100% | 14d → none |  |
| A81550 | Install Manhole | 2026-04-26 → 2026-08-20 A (+116d) | 2026-04-29 → 2026-09-28 A (+152d) | 0% → 100% | 21d → none | A81530, A10240 → A81530 |
| A81570 | Backfilling & Compaction | 2026-05-25 → 2026-09-26 A (+124d) | 2026-06-01 → 2026-10-01 A (+122d) | 0% → 100% | 0d → none |  |

| ID | Task | Start | Finish | Complete | Total float | Predecessors |
| --- | --- | --- | --- | --- | --- | --- |
| A81560 | Testing & Inspection | 2026-05-06 → 2026-10-03 (+150d) | 2026-05-07 → 2026-10-05 (+151d) |  | 14d → -79.2d |  |
| MH-3 A /MH-4 | **MH-3 A /MH-4** | 2026-04-20 → 2026-08-20 (+122d) | 2026-06-09 → 2026-10-05 (+118d) |  |  |  |
| A81330 | Excavation | 2026-04-20 → 2026-08-20 A (+122d) | 2026-04-23 → 2026-09-28 A (+158d) | 0% → 100% | 17d → none |  |
| A81340 | Pipe Laying | 2026-04-25 → 2026-08-20 A (+117d) | 2026-05-10 → 2026-09-28 A (+141d) | 0% → 100% | 17d → none |  |
| A81350 | Install Manhole | 2026-04-26 → 2026-08-20 A (+116d) | 2026-04-29 → 2026-09-28 A (+152d) | 0% → 100% | 28d → none | A81330, A10240 → A81330 |
| A81370 | Backfilling & Compaction | 2026-06-02 → 2026-09-26 A (+116d) | 2026-06-09 → 2026-10-01 A (+114d) | 0% → 100% | 0d → none |  |
| A81360 | Testing & Inspection | 2026-05-11 → 2026-10-03 (+145d) | 2026-05-12 → 2026-10-05 (+146d) |  | 17d → -79.2d |  |
| MH-A10 /MH-A11 | **MH-A10 /MH-A11** | 2026-05-23 → 2026-08-20 (+89d) | 2026-08-02 → 2026-11-19 (+109d) |  |  |  |
| A80980 | Excavation | 2026-05-23 → 2026-08-20 A (+89d) | 2026-05-26 → 2026-09-28 A (+125d) | 0% → 100% | 35d → none |  |
| A80990 | Pipe Laying | 2026-05-27 → 2026-08-20 A (+85d) | 2026-06-11 → 2026-09-28 A (+109d) | 0% → 100% | 35d → none |  |
| A81000 | Install Manhole | 2026-05-27 → 2026-08-20 A (+85d) | 2026-05-31 → 2026-09-28 A (+120d) | 0% → 100% | 47d → none | A80980, A10240 → A80980 |
| A81010 | Testing & Inspection | 2026-06-13 → 2026-10-03 (+112d) | 2026-06-14 → 2026-10-05 (+113d) |  | 35d → -47.2d |  |
| A81020 | Backfilling & Compaction | 2026-07-26 → 2026-11-11 (+108d) | 2026-08-02 → 2026-11-19 (+109d) |  | 0d → -79.2d |  |
| MH-A11 /MH-A12 | **MH-A11 /MH-A12** | 2026-05-27 → 2026-08-20 (+85d) | 2026-08-10 → 2026-11-28 (+110d) |  |  |  |
| A80930 | Excavation | 2026-05-27 → 2026-08-20 A (+85d) | 2026-05-31 → 2026-09-28 A (+120d) | 0% → 100% | 38d → none |  |
| A80940 | Pipe Laying | 2026-06-01 → 2026-08-20 A (+80d) | 2026-06-16 → 2026-09-28 A (+104d) | 0% → 100% | 38d → none |  |
| A80950 | Install Manhole | 2026-06-01 → 2026-08-20 A (+80d) | 2026-06-04 → 2026-09-28 A (+116d) | 0% → 100% | 50d → none | A80930, A10240 → A80930 |
| A80960 | Testing & Inspection | 2026-06-17 → 2026-10-03 (+108d) | 2026-06-18 → 2026-10-05 (+109d) |  | 38d → -40.2d |  |
| A80970 | Backfilling & Compaction | 2026-08-03 → 2026-11-19 (+108d) | 2026-08-10 → 2026-11-28 (+110d) |  | 0d → -79.2d |  |
| MH-A12 /MH-A13 | **MH-A12 /MH-A13** | 2026-06-01 → 2026-08-20 (+80d) | 2026-08-18 → 2026-12-06 (+110d) |  |  |  |
| A80880 | Excavation | 2026-06-01 → 2026-08-20 A (+80d) | 2026-06-04 → 2026-09-28 A (+116d) | 0% → 100% | 41d → none |  |
| A80890 | Pipe Laying | 2026-06-06 → 2026-08-20 A (+75d) | 2026-06-21 → 2026-09-28 A (+99d) | 0% → 100% | 41d → none |  |
| A80900 | Install Manhole | 2026-06-06 → 2026-08-20 A (+75d) | 2026-06-09 → 2026-09-28 A (+111d) | 0% → 100% | 53d → none | A80880, A10240 → A80880 |
| A80910 | Testing & Inspection | 2026-06-22 → 2026-10-03 (+103d) | 2026-06-23 → 2026-10-05 (+104d) |  | 41d → -33.2d |  |
| A80920 | Backfilling & Compaction | 2026-08-11 → 2026-11-28 (+109d) | 2026-08-18 → 2026-12-06 (+110d) |  | 0d → -79.2d |  |
| MH-A13 /MH-A14 | **MH-A13 /MH-A14** | 2026-06-06 → 2026-08-20 (+75d) | 2026-08-26 → 2026-12-14 (+110d) |  |  |  |
| A80830 | Excavation | 2026-06-06 → 2026-08-20 A (+75d) | 2026-06-09 → 2026-09-28 A (+111d) | 0% → 100% | 44d → none |  |
| A80840 | Pipe Laying | 2026-06-10 → 2026-08-20 A (+71d) | 2026-06-25 → 2026-09-28 A (+95d) | 0% → 100% | 44d → none |  |
| A80850 | Install Manhole | 2026-06-10 → 2026-08-20 A (+71d) | 2026-06-14 → 2026-09-28 A (+106d) | 0% → 100% | 56d → none | A80830, A10240 → A80830 |
| A80860 | Testing & Inspection | 2026-06-27 → 2026-10-03 (+98d) | 2026-06-28 → 2026-10-05 (+99d) |  | 44d → -26.2d |  |
| A80870 | Backfilling & Compaction | 2026-08-19 → 2026-12-06 (+109d) | 2026-08-26 → 2026-12-14 (+110d) |  | 0d → -79.2d |  |
| MH-A14 /MH-A15 | **MH-A14 /MH-A15** | 2026-06-10 → 2026-08-20 (+71d) | 2026-09-03 → 2026-12-22 (+110d) |  |  |  |
| A80780 | Excavation | 2026-06-10 → 2026-08-20 A (+71d) | 2026-06-14 → 2026-09-28 A (+106d) | 0% → 100% | 47d → none |  |
| A80790 | Pipe Laying | 2026-06-15 → 2026-08-20 A (+66d) | 2026-06-30 → 2026-09-28 A (+90d) | 0% → 100% | 47d → none |  |
| A80800 | Install Manhole | 2026-06-15 → 2026-08-20 A (+66d) | 2026-06-18 → 2026-09-28 A (+102d) | 0% → 100% | 59d → none | A80780, A10240 → A80780 |
| A80810 | Testing & Inspection | 2026-07-01 → 2026-10-03 (+94d) | 2026-07-02 → 2026-10-05 (+95d) |  | 47d → -19.2d |  |
| A80820 | Backfilling & Compaction | 2026-08-27 → 2026-12-14 (+109d) | 2026-09-03 → 2026-12-22 (+110d) |  | 0d → -79.2d |  |
| MH-A15 /MH-A16 | **MH-A15 /MH-A16** | 2026-06-15 → 2026-08-20 (+66d) | 2026-09-12 → 2026-12-30 (+109d) |  |  |  |
| A80730 | Excavation | 2026-06-15 → 2026-08-20 A (+66d) | 2026-06-18 → 2026-09-28 A (+102d) | 0% → 100% | 50d → none |  |
| A80740 | Pipe Laying | 2026-06-20 → 2026-08-20 A (+61d) | 2026-07-05 → 2026-09-28 A (+85d) | 0% → 100% | 50d → none |  |
| A80750 | Install Manhole | 2026-06-20 → 2026-08-20 A (+61d) | 2026-06-23 → 2026-09-28 A (+97d) | 0% → 100% | 62d → none | A80730, A10240 → A80730 |
| A80760 | Testing & Inspection | 2026-07-06 → 2026-10-03 (+89d) | 2026-07-07 → 2026-10-05 (+90d) |  | 50d → -12.2d |  |
| A80770 | Backfilling & Compaction | 2026-09-05 → 2026-12-22 (+108d) | 2026-09-12 → 2026-12-30 (+109d) |  | 0d → -79.2d |  |
| MH-A16 /MH-A17 | **MH-A16 /MH-A17** | 2026-06-20 → 2026-08-20 (+61d) | 2026-09-20 → 2027-01-07 (+109d) |  |  |  |
| A80680 | Excavation | 2026-06-20 → 2026-08-20 A (+61d) | 2026-06-23 → 2026-09-28 A (+97d) | 0% → 100% | 53d → none |  |
| A80690 | Pipe Laying | 2026-06-24 → 2026-08-20 A (+57d) | 2026-07-09 → 2026-09-28 A (+81d) | 0% → 100% | 53d → none |  |
| A80700 | Install Manhole | 2026-06-24 → 2026-08-20 A (+57d) | 2026-06-28 → 2026-09-28 A (+92d) | 0% → 100% | 65d → none | A80680, A10240 → A80680 |
| A80710 | Testing & Inspection | 2026-07-11 → 2026-10-03 (+84d) | 2026-07-12 → 2026-10-05 (+85d) |  | 53d → -5.2d |  |
| A80720 | Backfilling & Compaction | 2026-09-13 → 2026-12-30 (+108d) | 2026-09-20 → 2027-01-07 (+109d) |  | 0d → -79.2d |  |
| MH-A17 /MH-A18 | **MH-A17 /MH-A18** | 2026-06-24 → 2026-08-20 (+57d) | 2026-09-28 → 2027-01-16 (+110d) |  |  |  |
| A80630 | Excavation | 2026-06-24 → 2026-08-20 A (+57d) | 2026-06-28 → 2026-09-28 A (+92d) | 0% → 100% | 56d → none |  |
| A80640 | Pipe Laying | 2026-06-29 → 2026-08-20 A (+52d) | 2026-07-14 → 2026-09-28 A (+76d) | 0% → 100% | 56d → none |  |
| A80650 | Install Manhole | 2026-06-29 → 2026-08-20 A (+52d) | 2026-07-02 → 2026-09-28 A (+88d) | 0% → 100% | 68d → none | A80630, A10240 → A80630 |
| A80660 | Testing & Inspection | 2026-07-15 → 2026-10-03 (+80d) | 2026-07-16 → 2026-10-05 (+81d) |  | 56d → 1.8d |  |
| A80670 | Backfilling & Compaction | 2026-09-21 → 2027-01-07 (+108d) | 2026-09-28 → 2027-01-16 (+110d) |  | 0d → -79.2d |  |
| MH-A18 /MH-A19 | **MH-A18 /MH-A19** | 2026-06-29 → 2026-08-20 (+52d) | 2026-10-06 → 2027-01-24 (+110d) |  |  |  |
| A80580 | Excavation | 2026-06-29 → 2026-08-20 A (+52d) | 2026-07-02 → 2026-09-28 A (+88d) | 0% → 100% | 59d → none |  |
| A80590 | Pipe Laying | 2026-07-04 → 2026-08-20 A (+47d) | 2026-07-19 → 2026-09-28 A (+71d) | 0% → 100% | 59d → none |  |
| A80600 | Install Manhole | 2026-07-04 → 2026-08-20 A (+47d) | 2026-07-07 → 2026-09-28 A (+83d) | 0% → 100% | 71d → none | A80580, A10240 → A80580 |
| A80610 | Testing & Inspection | 2026-07-20 → 2026-10-03 (+75d) | 2026-07-21 → 2026-10-05 (+76d) |  | 59d → 8.8d |  |
| A80620 | Backfilling & Compaction | 2026-09-29 → 2027-01-16 (+109d) | 2026-10-06 → 2027-01-24 (+110d) |  | 0d → -79.2d |  |
| MH-A19 /MH-A20 | **MH-A19 /MH-A20** | 2026-07-04 → 2026-08-20 (+47d) | 2026-10-14 → 2027-02-01 (+110d) |  |  |  |
| A80530 | Excavation | 2026-07-04 → 2026-08-20 A (+47d) | 2026-07-07 → 2026-09-28 A (+83d) | 0% → 100% | 62d → none |  |
| A80540 | Pipe Laying | 2026-07-08 → 2026-08-20 A (+43d) | 2026-07-23 → 2026-09-28 A (+67d) | 0% → 100% | 62d → none |  |
| A80550 | Install Manhole | 2026-07-08 → 2026-08-20 A (+43d) | 2026-07-12 → 2026-09-28 A (+78d) | 0% → 100% | 74d → none | A80530, A10240 → A80530 |
| A80560 | Testing & Inspection | 2026-07-25 → 2026-10-03 (+70d) | 2026-07-26 → 2026-10-05 (+71d) |  | 62d → 15.8d |  |
| A80570 | Backfilling & Compaction | 2026-10-07 → 2027-01-24 (+109d) | 2026-10-14 → 2027-02-01 (+110d) |  | 0d → -79.2d |  |
| MH-A20 /MH-A21 | **MH-A20 /MH-A21** | 2026-07-08 → 2026-08-20 (+43d) | 2026-10-22 → 2027-02-09 (+110d) |  |  |  |
| A80480 | Excavation | 2026-07-08 → 2026-08-20 A (+43d) | 2026-07-12 → 2026-09-28 A (+78d) | 0% → 100% | 65d → none |  |
| A80490 | Pipe Laying | 2026-07-13 → 2026-08-20 A (+38d) | 2026-07-28 → 2026-09-28 A (+62d) | 0% → 100% | 65d → none |  |

| ID | Task | Start | Finish | Complete | Total float | Predecessors |
| --- | --- | --- | --- | --- | --- | --- |
| A80500 | Install Manhole | 2026-07-13 → 2026-08-20 A (+38d) | 2026-07-16 → 2026-09-28 A (+74d) | 0% → 100% | 77d → none | A80480, A10240 → A80480 |
| A80510 | Testing & Inspection | 2026-07-29 → 2026-10-03 (+66d) | 2026-07-30 → 2026-10-05 (+67d) |  | 65d → 22.8d |  |
| A80520 | Backfilling & Compaction | 2026-10-15 → 2027-02-01 (+109d) | 2026-10-22 → 2027-02-09 (+110d) |  | 0d → -79.2d |  |
| MH-A21 /MH-A22 | **MH-A21 /MH-A22** | 2026-07-13 → 2026-10-03 (+82d) | 2026-10-31 → 2027-02-17 (+109d) |  |  |  |
| A80430 | Excavation | 2026-07-13 → 2026-10-03 (+82d) | 2026-07-16 → 2026-10-07 (+83d) |  | 68d → 11.8d |  |
| A80440 | Pipe Laying | 2026-07-18 → 2026-10-07 (+81d) | 2026-08-02 → 2026-10-24 (+83d) |  | 68d → 11.8d |  |
| A80450 | Install Manhole | 2026-07-18 → 2026-10-07 (+81d) | 2026-07-21 → 2026-10-12 (+83d) |  | 80d → 23.8d | A80430, A10240 → A80430 |
| A80460 | Testing & Inspection | 2026-08-03 → 2026-10-24 (+82d) | 2026-08-04 → 2026-10-26 (+83d) |  | 68d → 11.8d |  |
| A80470 | Backfilling & Compaction | 2026-10-24 → 2027-02-09 (+108d) | 2026-10-31 → 2027-02-17 (+109d) |  | 0d → -79.2d |  |
| MH-A22 /MH-A23 | **MH-A22 /MH-A23** | 2026-07-18 → 2026-10-07 (+81d) | 2026-11-08 → 2027-02-25 (+109d) |  |  |  |
| A80380 | Excavation | 2026-07-18 → 2026-10-07 (+81d) | 2026-07-21 → 2026-10-12 (+83d) |  | 71d → 14.8d |  |
| A80390 | Pipe Laying | 2026-07-22 → 2026-10-12 (+82d) | 2026-08-06 → 2026-10-28 (+83d) |  | 71d → 14.8d |  |
| A80400 | Install Manhole | 2026-07-22 → 2026-10-12 (+82d) | 2026-07-26 → 2026-10-17 (+83d) |  | 83d → 26.8d | A80380, A10240 → A80380 |
| A80410 | Testing & Inspection | 2026-08-08 → 2026-10-28 (+81d) | 2026-08-09 → 2026-10-31 (+83d) |  | 71d → 14.8d |  |
| A80420 | Backfilling & Compaction | 2026-11-01 → 2027-02-17 (+108d) | 2026-11-08 → 2027-02-25 (+109d) |  | 0d → -79.2d |  |
| MH-A23 /MH-A24 | **MH-A23 /MH-A24** | 2026-07-22 → 2026-10-12 (+82d) | 2026-11-16 → 2027-03-06 (+110d) |  |  |  |
| A80330 | Excavation | 2026-07-22 → 2026-10-12 (+82d) | 2026-07-26 → 2026-10-17 (+83d) |  | 74d → 17.8d |  |
| A80340 | Pipe Laying | 2026-07-27 → 2026-10-17 (+82d) | 2026-08-11 → 2026-11-02 (+83d) |  | 74d → 17.8d |  |
| A80350 | Install Manhole | 2026-07-27 → 2026-10-17 (+82d) | 2026-07-30 → 2026-10-21 (+83d) |  | 86d → 29.8d | A80330, A10240 → A80330 |
| A80360 | Testing & Inspection | 2026-08-12 → 2026-11-02 (+82d) | 2026-08-13 → 2026-11-04 (+83d) |  | 74d → 17.8d |  |
| A80370 | Backfilling & Compaction | 2026-11-09 → 2027-02-25 (+108d) | 2026-11-16 → 2027-03-06 (+110d) |  | 0d → -79.2d |  |
| MH-A24 /MH-A25 | **MH-A24 /MH-A25** | 2026-07-27 → 2026-10-17 (+82d) | 2026-11-24 → 2027-03-14 (+110d) |  |  |  |
| A80280 | Excavation | 2026-07-27 → 2026-10-17 (+82d) | 2026-07-30 → 2026-10-21 (+83d) |  | 77d → 20.8d |  |
| A80290 | Pipe Laying | 2026-08-01 → 2026-10-21 (+81d) | 2026-08-16 → 2026-11-07 (+83d) |  | 77d → 20.8d |  |
| A80300 | Install Manhole | 2026-08-01 → 2026-10-21 (+81d) | 2026-08-04 → 2026-10-26 (+83d) |  | 89d → 32.8d |  |
| A80310 | Testing & Inspection | 2026-08-17 → 2026-11-07 (+82d) | 2026-08-18 → 2026-11-09 (+83d) |  | 77d → 20.8d |  |
| A80320 | Backfilling & Compaction | 2026-11-17 → 2027-03-06 (+109d) | 2026-11-24 → 2027-03-14 (+110d) |  | 0d → -79.2d |  |
| MH-A25 /MH-A26 | **MH-A25 /MH-A26** | 2026-08-01 → 2026-10-21 (+81d) | 2026-12-02 → 2027-03-22 (+110d) |  |  |  |
| A80230 | Excavation | 2026-08-01 → 2026-10-21 (+81d) | 2026-08-04 → 2026-10-26 (+83d) |  | 80d → 23.8d |  |
| A80240 | Pipe Laying | 2026-08-05 → 2026-10-26 (+82d) | 2026-08-20 → 2026-11-11 (+83d) |  | 80d → 23.8d |  |
| A80250 | Install Manhole | 2026-08-05 → 2026-10-26 (+82d) | 2026-08-09 → 2026-10-31 (+83d) |  | 92d → 35.8d |  |
| A80260 | Testing & Inspection | 2026-08-22 → 2026-11-11 (+81d) | 2026-08-23 → 2026-11-14 (+83d) |  | 80d → 23.8d |  |
| A80270 | Backfilling & Compaction | 2026-11-25 → 2027-03-14 (+109d) | 2026-12-02 → 2027-03-22 (+110d) |  | 0d → -79.2d |  |
| MH-A26 /MH-A27 | **MH-A26 /MH-A27** | 2026-08-05 → 2026-10-26 (+82d) | 2026-12-10 → 2027-03-30 (+110d) |  |  |  |
| A80180 | Excavation | 2026-08-05 → 2026-10-26 (+82d) | 2026-08-09 → 2026-10-31 (+83d) |  | 83d → 26.8d |  |
| A80190 | Pipe Laying | 2026-08-10 → 2026-10-31 (+82d) | 2026-08-25 → 2026-11-16 (+83d) |  | 83d → 26.8d |  |
| A80200 | Install Manhole | 2026-08-10 → 2026-10-31 (+82d) | 2026-08-13 → 2026-11-04 (+83d) |  | 95d → 38.8d |  |
| A80210 | Testing & Inspection | 2026-08-26 → 2026-11-16 (+82d) | 2026-08-27 → 2026-11-18 (+83d) |  | 83d → 26.8d |  |
| A80220 | Backfilling & Compaction | 2026-12-03 → 2027-03-22 (+109d) | 2026-12-10 → 2027-03-30 (+110d) |  | 0d → -79.2d |  |
| MH-A27 /MH-A28 | **MH-A27 /MH-A28** | 2026-08-10 → 2026-10-31 (+82d) | 2026-12-19 → 2027-04-07 (+109d) |  |  |  |
| A80130 | Excavation | 2026-08-10 → 2026-10-31 (+82d) | 2026-08-13 → 2026-11-04 (+83d) |  | 86d → 29.8d |  |
| A80140 | Pipe Laying | 2026-08-15 → 2026-11-04 (+81d) | 2026-08-30 → 2026-11-21 (+83d) |  | 86d → 29.8d |  |
| A80150 | Install Manhole | 2026-08-15 → 2026-11-04 (+81d) | 2026-08-18 → 2026-11-09 (+83d) |  | 98d → 41.8d |  |
| A80160 | Testing & Inspection | 2026-08-31 → 2026-11-21 (+82d) | 2026-09-01 → 2026-11-23 (+83d) |  | 86d → 29.8d |  |
| A80170 | Backfilling & Compaction | 2026-12-12 → 2027-03-30 (+108d) | 2026-12-19 → 2027-04-07 (+109d) |  | 0d → -79.2d |  |
| MH-A28 /MH-A29 | **MH-A28 /MH-A29** | 2026-08-15 → 2026-11-04 (+81d) | 2026-12-27 → 2027-04-15 (+109d) |  |  |  |
| A80080 | Excavation | 2026-08-15 → 2026-11-04 (+81d) | 2026-08-18 → 2026-11-09 (+83d) |  | 89d → 32.8d |  |
| A80090 | Pipe Laying | 2026-08-19 → 2026-11-09 (+82d) | 2026-09-03 → 2026-11-25 (+83d) |  | 89d → 32.8d |  |
| A80100 | Install Manhole | 2026-08-19 → 2026-11-09 (+82d) | 2026-08-23 → 2026-11-14 (+83d) |  | 101d → 44.8d |  |
| A80110 | Testing & Inspection | 2026-09-05 → 2026-11-25 (+81d) | 2026-09-06 → 2026-11-28 (+83d) |  | 89d → 32.8d |  |
| A80120 | Backfilling & Compaction | 2026-12-20 → 2027-04-07 (+108d) | 2026-12-27 → 2027-04-15 (+109d) |  | 0d → -79.2d |  |
| MH-A29 /MH-A30 | **MH-A29 /MH-A30** | 2026-08-19 → 2026-11-09 (+82d) | 2027-01-04 → 2027-04-24 (+110d) |  |  |  |
| A80030 | Excavation | 2026-08-19 → 2026-11-09 (+82d) | 2026-08-23 → 2026-11-14 (+83d) |  | 92d → 35.8d |  |
| A80040 | Pipe Laying | 2026-08-24 → 2026-11-14 (+82d) | 2026-09-08 → 2026-11-30 (+83d) |  | 92d → 35.8d |  |
| A80050 | Install Manhole | 2026-08-24 → 2026-11-14 (+82d) | 2026-08-27 → 2026-11-18 (+83d) |  | 104d → 47.8d |  |
| A80060 | Testing & Inspection | 2026-09-09 → 2026-11-30 (+82d) | 2026-09-10 → 2026-12-02 (+83d) |  | 92d → 35.8d |  |
| A80070 | Backfilling & Compaction | 2026-12-28 → 2027-04-15 (+108d) | 2027-01-04 → 2027-04-24 (+110d) |  | 0d → -79.2d |  |
| MH-A30 /MH-A31 | **MH-A30 /MH-A31** | 2026-08-24 → 2026-11-14 (+82d) | 2027-01-12 → 2027-05-02 (+110d) |  |  |  |
| A79980 | Excavation | 2026-08-24 → 2026-11-14 (+82d) | 2026-08-27 → 2026-11-18 (+83d) |  | 95d → 38.8d |  |
| A79990 | Pipe Laying | 2026-08-29 → 2026-11-18 (+81d) | 2026-09-13 → 2026-12-05 (+83d) |  | 95d → 38.8d |  |
| A80000 | Install Manhole | 2026-08-29 → 2026-11-18 (+81d) | 2026-09-01 → 2026-11-23 (+83d) |  | 107d → 50.8d |  |
| A80010 | Testing & Inspection | 2026-09-14 → 2026-12-05 (+82d) | 2026-09-15 → 2026-12-07 (+83d) |  | 95d → 38.8d |  |
| A80020 | Backfilling & Compaction | 2027-01-05 → 2027-04-24 (+109d) | 2027-01-12 → 2027-05-02 (+110d) |  | 0d → -79.2d |  |
| MH-A4 /MH-A5 | **MH-A4 /MH-A5** | 2026-04-25 → 2026-08-20 (+117d) | 2026-06-17 → 2026-10-05 (+110d) |  |  |  |
| A81280 | Excavation | 2026-04-25 → 2026-08-20 A (+117d) | 2026-04-28 → 2026-09-28 A (+153d) | 0% → 100% | 20d → none |  |
| A81290 | Pipe Laying | 2026-04-29 → 2026-08-20 A (+113d) | 2026-05-14 → 2026-09-28 A (+137d) | 0% → 100% | 20d → none |  |
| A81300 | Install Manhole | 2026-04-29 → 2026-08-20 A (+113d) | 2026-05-03 → 2026-09-28 A (+148d) | 0% → 100% | 32d → none | A81280, A10240 → A81280 |
| A81320 | Backfilling & Compaction | 2026-06-10 → 2026-09-21 A (+103d) | 2026-06-17 → 2026-10-01 A (+106d) | 0% → 100% | 0d → none |  |
| A81310 | Testing & Inspection | 2026-05-16 → 2026-10-03 (+140d) | 2026-05-17 → 2026-10-05 (+141d) |  | 20d → -79.2d |  |
| MH-A5 /MH-A6 | **MH-A5 /MH-A6** | 2026-04-29 → 2026-08-20 (+113d) | 2026-06-25 → 2026-10-13 (+110d) |  |  |  |

| ID | Task | Start | Finish | Complete | Total float | Predecessors |
| --- | --- | --- | --- | --- | --- | --- |
| A81230 | Excavation | 2026-04-29 → 2026-08-20 A (+113d) | 2026-05-03 → 2026-09-28 A (+148d) | 0% → 100% | 23d → none |  |
| A81240 | Pipe Laying | 2026-05-04 → 2026-08-20 A (+108d) | 2026-05-19 → 2026-09-28 A (+132d) | 0% → 100% | 23d → none |  |
| A81250 | Install Manhole | 2026-05-04 → 2026-08-20 A (+108d) | 2026-05-07 → 2026-09-28 A (+144d) | 0% → 100% | 35d → none | A81230, A10240 → A81230 |
| A81260 | Testing & Inspection | 2026-05-20 → 2026-10-03 (+136d) | 2026-05-21 → 2026-10-05 (+137d) |  | 23d → -79.2d |  |
| A81270 | Backfilling & Compaction | 2026-06-18 → 2026-10-05 (+109d) | 2026-06-25 → 2026-10-13 (+110d) |  | 0d → -79.2d |  |
| MH-A6 /MH-A7 | **MH-A6 /MH-A7** | 2026-05-04 → 2026-08-20 (+108d) | 2026-06-30 → 2026-10-18 (+110d) |  |  |  |
| A81180 | Excavation | 2026-05-04 → 2026-08-20 A (+108d) | 2026-05-07 → 2026-09-28 A (+144d) | 0% → 100% | 26d → none |  |
| A81190 | Pipe Laying | 2026-05-09 → 2026-08-20 A (+103d) | 2026-05-24 → 2026-09-28 A (+127d) | 0% → 100% | 26d → none |  |
| A81200 | Install Manhole | 2026-05-09 → 2026-08-20 A (+103d) | 2026-05-12 → 2026-09-28 A (+139d) | 0% → 100% | 38d → none | A81180, A10240 → A81180 |
| A81210 | Testing & Inspection | 2026-05-25 → 2026-10-03 (+131d) | 2026-05-26 → 2026-10-05 (+132d) |  | 26d → -72.2d |  |
| A81220 | Backfilling & Compaction | 2026-06-27 → 2026-10-13 (+108d) | 2026-06-30 → 2026-10-18 (+110d) |  | 0d → -79.2d |  |
| MH-A7 /MH-A8 | **MH-A7 /MH-A8** | 2026-05-09 → 2026-08-20 (+103d) | 2026-07-08 → 2026-10-26 (+110d) |  |  |  |
| A81130 | Excavation | 2026-05-09 → 2026-08-20 A (+103d) | 2026-05-12 → 2026-09-28 A (+139d) | 0% → 100% | 26d → none |  |
| A81140 | Pipe Laying | 2026-05-13 → 2026-08-20 A (+99d) | 2026-05-28 → 2026-09-28 A (+123d) | 0% → 100% | 26d → none |  |
| A81150 | Install Manhole | 2026-05-13 → 2026-08-20 A (+99d) | 2026-05-17 → 2026-09-28 A (+134d) | 0% → 100% | 38d → none | A81130, A10240 → A81130 |
| A81160 | Testing & Inspection | 2026-05-30 → 2026-10-03 (+126d) | 2026-05-31 → 2026-10-05 (+127d) |  | 26d → -68.2d |  |
| A81170 | Backfilling & Compaction | 2026-07-01 → 2026-10-18 (+109d) | 2026-07-08 → 2026-10-26 (+110d) |  | 0d → -79.2d |  |
| MH-A8 /MH-A9 | **MH-A8 /MH-A9** | 2026-05-13 → 2026-08-20 (+99d) | 2026-07-16 → 2026-11-03 (+110d) |  |  |  |
| A81080 | Excavation | 2026-05-13 → 2026-08-20 A (+99d) | 2026-05-17 → 2026-09-28 A (+134d) | 0% → 100% | 32d → none |  |
| A81090 | Pipe Laying | 2026-05-18 → 2026-08-20 A (+94d) | 2026-05-21 → 2026-09-28 A (+130d) | 0% → 100% | 39d → none |  |
| A81100 | Install Manhole | 2026-05-18 → 2026-08-20 A (+94d) | 2026-05-21 → 2026-09-28 A (+130d) | 0% → 100% | 41d → none | A81080, A10240 → A81080 |
| A81110 | Testing & Inspection | 2026-05-23 → 2026-10-03 (+133d) | 2026-05-24 → 2026-10-05 (+134d) |  | 39d → -61.2d |  |
| A81120 | Backfilling & Compaction | 2026-07-09 → 2026-10-26 (+109d) | 2026-07-16 → 2026-11-03 (+110d) |  | 0d → -79.2d |  |
| MH-A9 /MH-A10 | **MH-A9 /MH-A10** | 2026-05-18 → 2026-08-20 (+94d) | 2026-07-25 → 2026-11-11 (+109d) |  |  |  |
| A81030 | Excavation | 2026-05-18 → 2026-08-20 A (+94d) | 2026-05-21 → 2026-09-28 A (+130d) | 0% → 100% | 32d → none |  |
| A81040 | Pipe Laying | 2026-05-23 → 2026-08-20 A (+89d) | 2026-06-07 → 2026-09-28 A (+113d) | 0% → 100% | 32d → none |  |
| A81050 | Install Manhole | 2026-05-23 → 2026-08-20 A (+89d) | 2026-05-26 → 2026-09-28 A (+125d) | 0% → 100% | 44d → none | A81030, A10240 → A81030 |
| A81060 | Testing & Inspection | 2026-06-08 → 2026-10-03 (+117d) | 2026-06-09 → 2026-10-05 (+118d) |  | 32d → -54.2d |  |
| A81070 | Backfilling & Compaction | 2026-07-18 → 2026-11-03 (+108d) | 2026-07-25 → 2026-11-11 (+109d) |  | 0d → -79.2d |  |
| TIN IN TOMH 1.1 | **TIN IN TOMH 1.1** | 2026-04-01 → 2026-08-20 (+141d) | 2026-05-07 → 2026-10-05 (+151d) |  |  |  |
| A81380 | Excavation | 2026-04-01 → 2026-08-20 A (+141d) | 2026-04-05 → 2026-09-28 A (+176d) | 0% → 100% | 5d → none |  |
| A81390 | Pipe Laying | 2026-04-06 → 2026-08-20 A (+136d) | 2026-04-21 → 2026-09-28 A (+160d) | 0% → 100% | 5d → none |  |
| A81400 | Install Manhole | 2026-04-26 → 2026-08-20 A (+116d) | 2026-04-29 → 2026-09-28 A (+152d) | 0% → 100% | 0d → none | A81380, A10240 → A81380 |
| A81420 | Backfilling & Compaction | 2026-04-30 → 2026-08-28 A (+120d) | 2026-05-07 → 2026-09-28 A (+144d) | 0% → 100% | 0d → none |  |
| A81410 | Testing & Inspection | 2026-04-22 → 2026-10-03 (+164d) | 2026-04-23 → 2026-10-05 (+165d) |  | 5d → -79.2d |  |
| COLLECTOR ROAD | **COLLECTOR ROAD** | 2026-03-09 → 2026-08-20 (+164d) | 2026-11-29 → 2026-10-25 (-35d) |  |  |  |
| CU-01 | **CU-01** | 2026-10-03 → 2026-08-20 (-44d) | 2026-11-29 → 2026-09-28 (-62d) |  |  |  |
| A92760 | Excavation - Box Culverts | 2026-10-03 → 2026-08-20 A (-44d) | 2026-10-06 → 2026-09-28 A (-8d) | 0% → 100% | 38d → none |  |
| A92770 | Foundation works | 2026-10-07 → 2026-08-20 A (-48d) | 2026-10-18 → 2026-09-28 A (-20d) | 0% → 100% | 38d → none |  |
| A92780 | Walls & Slabs works | 2026-10-19 → 2026-08-20 A (-60d) | 2026-11-03 → 2026-09-28 A (-36d) | 0% → 100% | 38d → none |  |
| A92790 | Wing walls and approach slab works | 2026-11-04 → 2026-08-20 A (-76d) | 2026-11-17 → 2026-09-28 A (-50d) | 0% → 100% | 38d → none |  |
| A92800 | Waterproofing for Culverts | 2026-11-04 → 2026-08-20 A (-76d) | 2026-11-08 → 2026-09-28 A (-41d) | 0% → 100% | 46d → none |  |
| A92810 | Riprap for culvert inlet and outlet slope protection | 2026-11-18 → 2026-08-20 A (-90d) | 2026-11-29 → 2026-09-28 A (-62d) | 0% → 100% | 38d → none |  |
| CU-02 | **CU-02** | 2026-10-03 → 2026-08-20 (-44d) | 2026-11-29 → 2026-09-28 (-62d) |  |  |  |
| A93120 | Excavation - Box Culverts | 2026-10-03 → 2026-08-20 A (-44d) | 2026-10-06 → 2026-09-28 A (-8d) | 0% → 100% | 38d → none |  |
| A93130 | Foundation works | 2026-10-07 → 2026-08-20 A (-48d) | 2026-10-18 → 2026-09-28 A (-20d) | 0% → 100% | 38d → none |  |
| A93140 | Walls & Slabs works | 2026-10-19 → 2026-08-20 A (-60d) | 2026-11-03 → 2026-09-28 A (-36d) | 0% → 100% | 38d → none |  |
| A93150 | Waterproofing for Culverts | 2026-11-04 → 2026-08-20 A (-76d) | 2026-11-08 → 2026-09-28 A (-41d) | 0% → 100% | 46d → none |  |
| A93160 | Wing walls and approach slab works | 2026-11-04 → 2026-08-20 A (-76d) | 2026-11-17 → 2026-09-28 A (-50d) | 0% → 100% | 38d → none |  |
| A93170 | Riprap for culvert inlet and outlet slope protection | 2026-11-18 → 2026-08-20 A (-90d) | 2026-11-29 → 2026-09-28 A (-62d) | 0% → 100% | 38d → none |  |
| CU-03 | **CU-03** | 2026-10-03 → 2026-08-20 (-44d) | 2026-11-29 → 2026-09-28 (-62d) |  |  |  |
| A93060 | Excavation - Box Culverts | 2026-10-03 → 2026-08-20 A (-44d) | 2026-10-06 → 2026-09-28 A (-8d) | 0% → 100% | 38d → none |  |
| A93070 | Foundation works | 2026-10-07 → 2026-08-20 A (-48d) | 2026-10-18 → 2026-09-28 A (-20d) | 0% → 100% | 38d → none |  |
| A93080 | Walls & Slabs works | 2026-10-19 → 2026-08-20 A (-60d) | 2026-11-03 → 2026-09-28 A (-36d) | 0% → 100% | 38d → none |  |
| A93090 | Waterproofing for Culverts | 2026-11-04 → 2026-08-20 A (-76d) | 2026-11-08 → 2026-09-28 A (-41d) | 0% → 100% | 46d → none |  |
| A93100 | Wing walls and approach slab works | 2026-11-04 → 2026-08-20 A (-76d) | 2026-11-17 → 2026-09-28 A (-50d) | 0% → 100% | 38d → none |  |
| A93110 | Riprap for culvert inlet and outlet slope protection | 2026-11-18 → 2026-08-20 A (-90d) | 2026-11-29 → 2026-09-28 A (-62d) | 0% → 100% | 38d → none |  |
| CU-04 | **CU-04** | 2026-10-03 → 2026-08-20 (-44d) | 2026-11-29 → 2026-09-28 (-62d) |  |  |  |
| A93000 | Excavation - Box Culverts | 2026-10-03 → 2026-08-20 A (-44d) | 2026-10-06 → 2026-09-28 A (-8d) | 0% → 100% | 38d → none |  |
| A93010 | Foundation works | 2026-10-07 → 2026-08-20 A (-48d) | 2026-10-18 → 2026-09-28 A (-20d) | 0% → 100% | 38d → none |  |
| A93020 | Walls & Slabs works | 2026-10-19 → 2026-08-20 A (-60d) | 2026-11-03 → 2026-09-28 A (-36d) | 0% → 100% | 38d → none |  |
| A93030 | Waterproofing for Culverts | 2026-11-04 → 2026-08-20 A (-76d) | 2026-11-08 → 2026-09-28 A (-41d) | 0% → 100% | 46d → none |  |
| A93040 | Wing walls and approach slab works | 2026-11-04 → 2026-08-20 A (-76d) | 2026-11-17 → 2026-09-28 A (-50d) | 0% → 100% | 38d → none |  |
| A93050 | Riprap for culvert inlet and outlet slope protection | 2026-11-18 → 2026-08-20 A (-90d) | 2026-11-29 → 2026-09-28 A (-62d) | 0% → 100% | 38d → none |  |
| CU-05 | **CU-05** | 2026-10-03 → 2026-08-20 (-44d) | 2026-11-29 → 2026-09-28 (-62d) |  |  |  |
| A92940 | Excavation - Box Culverts | 2026-10-03 → 2026-08-20 A (-44d) | 2026-10-06 → 2026-09-28 A (-8d) | 0% → 100% | 38d → none |  |
| A92950 | Foundation works | 2026-10-07 → 2026-08-20 A (-48d) | 2026-10-18 → 2026-09-28 A (-20d) | 0% → 100% | 38d → none |  |
| A92960 | Walls & Slabs works | 2026-10-19 → 2026-08-20 A (-60d) | 2026-11-03 → 2026-09-28 A (-36d) | 0% → 100% | 38d → none |  |
| A92970 | Waterproofing for Culverts | 2026-11-04 → 2026-08-20 A (-76d) | 2026-11-08 → 2026-09-28 A (-41d) | 0% → 100% | 46d → none |  |
| A92980 | Wing walls and approach slab works | 2026-11-04 → 2026-08-20 A (-76d) | 2026-11-17 → 2026-09-28 A (-50d) | 0% → 100% | 38d → none |  |

| ID | Task | Start | Finish | Complete | Total float |
| --- | --- | --- | --- | --- | --- |
| A92990 | Riprap for culvert inlet and outlet slope protection | 2026-11-18 → 2026-08-20 A (-90d) | 2026-11-29 → 2026-09-28 A (-62d) | 0% → 100% | 38d → none |
| CU-06 | **CU-06** | 2026-10-03 → 2026-08-20 (-44d) | 2026-11-29 → 2026-09-28 (-62d) |  |  |
| A92880 | Excavation - Box Culverts | 2026-10-03 → 2026-08-20 A (-44d) | 2026-10-06 → 2026-09-28 A (-8d) | 0% → 100% | 38d → none |
| A92890 | Foundation works | 2026-10-07 → 2026-08-20 A (-48d) | 2026-10-18 → 2026-09-28 A (-20d) | 0% → 100% | 38d → none |
| A92900 | Walls & Slabs works | 2026-10-19 → 2026-08-20 A (-60d) | 2026-11-03 → 2026-09-28 A (-36d) | 0% → 100% | 38d → none |
| A92910 | Waterproofing for Culverts | 2026-11-04 → 2026-08-20 A (-76d) | 2026-11-08 → 2026-09-28 A (-41d) | 0% → 100% | 46d → none |
| A92920 | Wing walls and approach slab works | 2026-11-04 → 2026-08-20 A (-76d) | 2026-11-17 → 2026-09-28 A (-50d) | 0% → 100% | 38d → none |
| A92930 | Riprap for culvert inlet and outlet slope protection | 2026-11-18 → 2026-08-20 A (-90d) | 2026-11-29 → 2026-09-28 A (-62d) | 0% → 100% | 38d → none |
| CU-07 | **CU-07** | 2026-10-03 → 2026-08-20 (-44d) | 2026-11-29 → 2026-09-28 (-62d) |  |  |
| A92820 | Excavation - Box Culverts | 2026-10-03 → 2026-08-20 A (-44d) | 2026-10-06 → 2026-09-28 A (-8d) | 0% → 100% | 38d → none |
| A92830 | Foundation works | 2026-10-07 → 2026-08-20 A (-48d) | 2026-10-18 → 2026-09-28 A (-20d) | 0% → 100% | 38d → none |
| A92840 | Walls & Slabs works | 2026-10-19 → 2026-08-20 A (-60d) | 2026-11-03 → 2026-09-28 A (-36d) | 0% → 100% | 38d → none |
| A92850 | Waterproofing for Culverts | 2026-11-04 → 2026-08-20 A (-76d) | 2026-11-08 → 2026-09-28 A (-41d) | 0% → 100% | 46d → none |
| A92860 | Wing walls and approach slab works | 2026-11-04 → 2026-08-20 A (-76d) | 2026-11-17 → 2026-09-28 A (-50d) | 0% → 100% | 38d → none |
| A92870 | Riprap for culvert inlet and outlet slope protection | 2026-11-18 → 2026-08-20 A (-90d) | 2026-11-29 → 2026-09-28 A (-62d) | 0% → 100% | 38d → none |
| MH-1-C /MH-2-C | **MH-1-C /MH-2-C** | 2026-03-09 → 2026-08-20 (+164d) | 2026-03-25 → 2026-10-05 (+194d) |  |  |
| A68080 | Excavation | 2026-03-09 → 2026-08-20 A (+164d) | 2026-03-12 → 2026-09-28 A (+200d) | 0% → 100% | 49d → none |
| A68090 | Pipe Laying | 2026-03-14 → 2026-08-20 A (+159d) | 2026-03-17 → 2026-09-28 A (+195d) | 0% → 100% | 52d → none |
| A68100 | Install Manhole | 2026-03-14 → 2026-08-20 A (+159d) | 2026-03-17 → 2026-09-28 A (+195d) | 0% → 100% | 54d → none |
| A68120 | Backfilling & Compaction | 2026-03-21 → 2026-08-20 A (+152d) | 2026-03-25 → 2026-09-28 A (+187d) | 0% → 100% | 52d → none |
| A68110 | Testing & Inspection | 2026-03-18 → 2026-10-03 (+199d) | 2026-03-19 → 2026-10-05 (+200d) |  | 52d → 12.36d |
| MH-1-E /MH-2-E | **MH-1-E /MH-2-E** | 2026-03-23 → 2026-08-20 (+150d) | 2026-04-15 → 2026-10-05 (+173d) |  |  |
| A77230 | Excavation | 2026-03-23 → 2026-08-20 A (+150d) | 2026-03-26 → 2026-09-28 A (+186d) | 0% → 100% | 51d → none |
| A77240 | Pipe Laying | 2026-03-28 → 2026-08-20 A (+145d) | 2026-04-05 → 2026-09-28 A (+176d) | 0% → 100% | 51d → none |
| A77250 | Install Manhole | 2026-03-28 → 2026-08-20 A (+145d) | 2026-03-31 → 2026-09-28 A (+181d) | 0% → 100% | 57d → none |
| A77270 | Backfilling & Compaction | 2026-04-11 → 2026-08-20 A (+131d) | 2026-04-15 → 2026-09-28 A (+166d) | 0% → 100% | 49d → none |
| A77260 | Testing & Inspection | 2026-04-06 → 2026-10-03 (+180d) | 2026-04-07 → 2026-10-05 (+181d) |  | 51d → 12.36d |
| MH-1-G /MH-2-G | **MH-1-G /MH-2-G** | 2026-04-06 → 2026-08-20 (+136d) | 2026-05-03 → 2026-10-10 (+160d) |  |  |
| A77380 | Excavation | 2026-04-06 → 2026-08-20 A (+136d) | 2026-04-09 → 2026-09-28 A (+172d) | 0% → 100% | 54d → none |
| A77390 | Pipe Laying | 2026-04-11 → 2026-08-20 A (+131d) | 2026-04-19 → 2026-09-28 A (+162d) | 0% → 100% | 54d → none |
| A77400 | Install Manhole | 2026-04-11 → 2026-08-20 A (+131d) | 2026-04-14 → 2026-09-28 A (+167d) | 0% → 100% | 60d → none |
| A77420 | Backfilling & Compaction | 2026-04-28 → 2026-08-20 A (+114d) | 2026-05-03 → 2026-09-28 A (+148d) | 0% → 100% | 49d → none |
| A77410 | Testing & Inspection | 2026-04-20 → 2026-10-07 (+170d) | 2026-04-21 → 2026-10-10 (+172d) |  | 54d → 13.36d |
| MH-1-L /MH-2-L | **MH-1-L /MH-2-L** | 2026-05-09 → 2026-08-20 (+103d) | 2026-06-11 → 2026-09-28 (+109d) |  |  |
| A77730 | Excavation | 2026-05-09 → 2026-08-20 A (+103d) | 2026-05-12 → 2026-09-28 A (+139d) | 0% → 100% | 60d → none |
| A77740 | Pipe Laying | 2026-05-13 → 2026-08-20 A (+99d) | 2026-05-21 → 2026-09-28 A (+130d) | 0% → 100% | 60d → none |
| A77750 | Install Manhole | 2026-05-13 → 2026-08-20 A (+99d) | 2026-05-17 → 2026-09-28 A (+134d) | 0% → 100% | 66d → none |
| A77760 | Testing & Inspection | 2026-05-23 → 2026-08-20 A (+89d) | 2026-05-24 → 2026-09-28 A (+127d) | 0% → 100% | 60d → none |
| A77770 | Backfilling & Compaction | 2026-06-07 → 2026-08-20 A (+74d) | 2026-06-11 → 2026-09-28 A (+109d) | 0% → 100% | 49d → none |
| MH-1-N /MH-2-N | **MH-1-N /MH-2-N** | 2026-06-01 → 2026-08-20 (+80d) | 2026-07-11 → 2026-09-28 (+79d) |  |  |
| A77980 | Excavation | 2026-06-01 → 2026-08-20 A (+80d) | 2026-06-04 → 2026-09-28 A (+116d) | 0% → 100% | 65d → none |
| A77990 | Pipe Laying | 2026-06-06 → 2026-08-20 A (+75d) | 2026-06-14 → 2026-09-28 A (+106d) | 0% → 100% | 65d → none |
| A78000 | Install Manhole | 2026-06-06 → 2026-08-20 A (+75d) | 2026-06-09 → 2026-09-28 A (+111d) | 0% → 100% | 71d → none |
| A78010 | Testing & Inspection | 2026-06-15 → 2026-08-20 A (+66d) | 2026-06-16 → 2026-09-28 A (+104d) | 0% → 100% | 65d → none |
| A78020 | Backfilling & Compaction | 2026-07-06 → 2026-08-20 A (+45d) | 2026-07-11 → 2026-09-28 A (+79d) | 0% → 100% | 49d → none |
| MH-1-P /MH-2-P | **MH-1-P /MH-2-P** | 2026-06-10 → 2026-08-20 (+71d) | 2026-07-22 → 2026-09-28 (+68d) |  |  |
| A78080 | Excavation | 2026-06-10 → 2026-08-20 A (+71d) | 2026-06-14 → 2026-09-28 A (+106d) | 0% → 100% | 67d → none |
| A78090 | Pipe Laying | 2026-06-15 → 2026-08-20 A (+66d) | 2026-06-23 → 2026-09-28 A (+97d) | 0% → 100% | 67d → none |
| A78100 | Install Manhole | 2026-06-15 → 2026-08-20 A (+66d) | 2026-06-18 → 2026-09-28 A (+102d) | 0% → 100% | 73d → none |
| A78110 | Testing & Inspection | 2026-06-24 → 2026-08-20 A (+57d) | 2026-06-25 → 2026-09-28 A (+95d) | 0% → 100% | 67d → none |
| A78120 | Backfilling & Compaction | 2026-07-18 → 2026-08-20 A (+33d) | 2026-07-22 → 2026-09-28 A (+68d) | 0% → 100% | 49d → none |
| MH-2-C /MH-3-C | **MH-2-C /MH-3-C** | 2026-03-14 → 2026-08-20 (+159d) | 2026-04-04 → 2026-10-05 (+184d) |  |  |
| A68130 | Excavation | 2026-03-14 → 2026-08-20 A (+159d) | 2026-03-17 → 2026-09-28 A (+195d) | 0% → 100% | 49d → none |
| A68140 | Pipe Laying | 2026-03-18 → 2026-08-20 A (+155d) | 2026-03-26 → 2026-09-28 A (+186d) | 0% → 100% | 49d → none |
| A68150 | Install Manhole | 2026-03-18 → 2026-08-20 A (+155d) | 2026-03-22 → 2026-09-28 A (+190d) | 0% → 100% | 55d → none |
| A68170 | Backfilling & Compaction | 2026-03-30 → 2026-08-20 A (+143d) | 2026-04-04 → 2026-09-28 A (+177d) | 0% → 100% | 49d → none |
| A68160 | Testing & Inspection | 2026-03-28 → 2026-10-03 (+189d) | 2026-03-29 → 2026-10-05 (+190d) |  | 49d → 12.36d |
| MH-2-E /MH-3-E | **MH-2-E /MH-3-E** | 2026-03-28 → 2026-08-20 (+145d) | 2026-04-21 → 2026-10-05 (+167d) |  |  |
| A77280 | Excavation | 2026-03-28 → 2026-08-20 A (+145d) | 2026-03-31 → 2026-09-28 A (+181d) | 0% → 100% | 52d → none |
| A77290 | Pipe Laying | 2026-04-01 → 2026-08-20 A (+141d) | 2026-04-09 → 2026-09-28 A (+172d) | 0% → 100% | 52d → none |
| A77300 | Install Manhole | 2026-04-01 → 2026-08-20 A (+141d) | 2026-04-05 → 2026-09-28 A (+176d) | 0% → 100% | 58d → none |
| A77320 | Backfilling & Compaction | 2026-04-16 → 2026-08-20 A (+126d) | 2026-04-21 → 2026-09-28 A (+160d) | 0% → 100% | 49d → none |
| A77310 | Testing & Inspection | 2026-04-11 → 2026-10-03 (+175d) | 2026-04-12 → 2026-10-05 (+176d) |  | 52d → 12.36d |
| MH-2-G /MH-3-G | **MH-2-G /MH-3-G** | 2026-04-11 → 2026-08-20 (+131d) | 2026-05-09 → 2026-09-28 (+142d) |  |  |
| A77430 | Excavation | 2026-04-11 → 2026-08-20 A (+131d) | 2026-04-14 → 2026-09-28 A (+167d) | 0% → 100% | 55d → none |
| A77440 | Pipe Laying | 2026-04-15 → 2026-08-20 A (+127d) | 2026-04-23 → 2026-09-28 A (+158d) | 0% → 100% | 55d → none |
| A77450 | Install Manhole | 2026-04-15 → 2026-08-20 A (+127d) | 2026-04-19 → 2026-09-28 A (+162d) | 0% → 100% | 61d → none |
| A77460 | Testing & Inspection | 2026-04-25 → 2026-08-20 A (+117d) | 2026-04-26 → 2026-09-28 A (+155d) | 0% → 100% | 55d → none |
| A77470 | Backfilling & Compaction | 2026-05-04 → 2026-08-20 A (+108d) | 2026-05-09 → 2026-09-28 A (+142d) | 0% → 100% | 49d → none |
| MH-2-L /MH-3-L | **MH-2-L /MH-3-L** | 2026-05-13 → 2026-08-20 (+99d) | 2026-06-17 → 2026-09-28 (+103d) |  |  |

| ID | Task | Start | Finish | Complete | Total float |
| --- | --- | --- | --- | --- | --- |
| A77780 | Excavation | 2026-05-13 → 2026-08-20 A (+99d) | 2026-05-17 → 2026-09-28 A (+134d) | 0% → 100% | 62d → none |
| A77790 | Pipe Laying | 2026-05-18 → 2026-08-20 A (+94d) | 2026-05-21 → 2026-09-28 A (+130d) | 0% → 100% | 65d → none |
| A77800 | Install Manhole | 2026-05-18 → 2026-08-20 A (+94d) | 2026-05-21 → 2026-09-28 A (+130d) | 0% → 100% | 67d → none |
| A77810 | Testing & Inspection | 2026-05-23 → 2026-08-20 A (+89d) | 2026-05-24 → 2026-09-28 A (+127d) | 0% → 100% | 65d → none |
| A77820 | Backfilling & Compaction | 2026-06-13 → 2026-08-20 A (+68d) | 2026-06-17 → 2026-09-28 A (+103d) | 0% → 100% | 49d → none |
| MH-2-N / 0-N | **MH-2-N / 0-N** | 2026-06-06 → 2026-08-20 (+75d) | 2026-07-16 → 2026-09-28 (+74d) |  |  |
| A78030 | Excavation | 2026-06-06 → 2026-08-20 A (+75d) | 2026-06-09 → 2026-09-28 A (+111d) | 0% → 100% | 66d → none |
| A78040 | Pipe Laying | 2026-06-10 → 2026-08-20 A (+71d) | 2026-06-18 → 2026-09-28 A (+102d) | 0% → 100% | 66d → none |
| A78050 | Install Manhole | 2026-06-10 → 2026-08-20 A (+71d) | 2026-06-14 → 2026-09-28 A (+106d) | 0% → 100% | 72d → none |
| A78060 | Testing & Inspection | 2026-06-20 → 2026-08-20 A (+61d) | 2026-06-21 → 2026-09-28 A (+99d) | 0% → 100% | 66d → none |
| A78070 | Backfilling & Compaction | 2026-07-12 → 2026-08-20 A (+39d) | 2026-07-16 → 2026-09-28 A (+74d) | 0% → 100% | 49d → none |
| MH-2-P /MH-3-P | **MH-2-P /MH-3-P** | 2026-06-15 → 2026-08-20 (+66d) | 2026-07-28 → 2026-09-28 (+62d) |  |  |
| A78130 | Excavation | 2026-06-15 → 2026-08-20 A (+66d) | 2026-06-18 → 2026-09-28 A (+102d) | 0% → 100% | 68d → none |
| A78140 | Pipe Laying | 2026-06-20 → 2026-08-20 A (+61d) | 2026-06-28 → 2026-09-28 A (+92d) | 0% → 100% | 68d → none |
| A78150 | Install Manhole | 2026-06-20 → 2026-08-20 A (+61d) | 2026-06-23 → 2026-09-28 A (+97d) | 0% → 100% | 74d → none |
| A78160 | Testing & Inspection | 2026-06-29 → 2026-08-20 A (+52d) | 2026-06-30 → 2026-09-28 A (+90d) | 0% → 100% | 68d → none |
| A78170 | Backfilling & Compaction | 2026-07-23 → 2026-08-20 A (+28d) | 2026-07-28 → 2026-09-28 A (+62d) | 0% → 100% | 49d → none |
| MH-3-C / 0-C | **MH-3-C / 0-C** | 2026-03-18 → 2026-08-20 (+155d) | 2026-04-09 → 2026-10-05 (+179d) |  |  |
| A75080 | Excavation | 2026-03-18 → 2026-08-20 A (+155d) | 2026-03-22 → 2026-09-28 A (+190d) | 0% → 100% | 50d → none |
| A75090 | Pipe Laying | 2026-03-23 → 2026-08-20 A (+150d) | 2026-03-31 → 2026-09-28 A (+181d) | 0% → 100% | 50d → none |
| A75100 | Install Manhole | 2026-03-23 → 2026-08-20 A (+150d) | 2026-03-26 → 2026-09-28 A (+186d) | 0% → 100% | 56d → none |
| A75120 | Backfilling & Compaction | 2026-04-05 → 2026-08-20 A (+137d) | 2026-04-09 → 2026-09-28 A (+172d) | 0% → 100% | 49d → none |
| A75110 | Testing & Inspection | 2026-04-01 → 2026-10-03 (+185d) | 2026-04-02 → 2026-10-05 (+186d) |  | 50d → 12.36d |
| MH-3-E / 0-E | **MH-3-E / 0-E** | 2026-04-01 → 2026-10-03 (+185d) | 2026-04-27 → 2026-10-25 (+181d) |  |  |
| A77330 | Excavation | 2026-04-01 → 2026-10-03 (+185d) | 2026-04-05 → 2026-10-07 (+185d) |  | 53d → 0.36d |
| A77340 | Pipe Laying | 2026-04-06 → 2026-10-07 (+184d) | 2026-04-14 → 2026-10-17 (+186d) |  | 53d → 0.36d |
| A77350 | Install Manhole | 2026-04-06 → 2026-10-07 (+184d) | 2026-04-09 → 2026-10-12 (+186d) |  | 59d → 6.36d |
| A77360 | Testing & Inspection | 2026-04-15 → 2026-10-17 (+185d) | 2026-04-16 → 2026-10-19 (+186d) |  | 53d → 0.36d |
| A77370 | Backfilling & Compaction | 2026-04-22 → 2026-10-19 (+180d) | 2026-04-27 → 2026-10-25 (+181d) |  | 49d → 0.36d |
| MH-3-G /MH-4-G | **MH-3-G /MH-4-G** | 2026-04-15 → 2026-08-20 (+127d) | 2026-05-14 → 2026-09-28 (+137d) |  |  |
| A77480 | Excavation | 2026-04-15 → 2026-08-20 A (+127d) | 2026-04-19 → 2026-09-28 A (+162d) | 0% → 100% | 56d → none |
| A77490 | Pipe Laying | 2026-04-20 → 2026-08-20 A (+122d) | 2026-04-28 → 2026-09-28 A (+153d) | 0% → 100% | 56d → none |
| A77500 | Install Manhole | 2026-04-20 → 2026-08-20 A (+122d) | 2026-04-23 → 2026-09-28 A (+158d) | 0% → 100% | 62d → none |
| A77510 | Testing & Inspection | 2026-04-29 → 2026-08-20 A (+113d) | 2026-04-30 → 2026-09-28 A (+151d) | 0% → 100% | 56d → none |
| A77520 | Backfilling & Compaction | 2026-05-10 → 2026-08-20 A (+102d) | 2026-05-14 → 2026-09-28 A (+137d) | 0% → 100% | 49d → none |
| MH-3-L /MH-4-L | **MH-3-L /MH-4-L** | 2026-05-18 → 2026-08-20 (+94d) | 2026-06-23 → 2026-09-28 (+97d) |  |  |
| A77830 | Excavation | 2026-05-18 → 2026-08-20 A (+94d) | 2026-05-21 → 2026-09-28 A (+130d) | 0% → 100% | 62d → none |
| A77840 | Pipe Laying | 2026-05-23 → 2026-08-20 A (+89d) | 2026-05-31 → 2026-09-28 A (+120d) | 0% → 100% | 62d → none |
| A77850 | Install Manhole | 2026-05-23 → 2026-08-20 A (+89d) | 2026-05-26 → 2026-09-28 A (+125d) | 0% → 100% | 68d → none |
| A77860 | Testing & Inspection | 2026-06-01 → 2026-08-20 A (+80d) | 2026-06-02 → 2026-09-28 A (+118d) | 0% → 100% | 62d → none |
| A77870 | Backfilling & Compaction | 2026-06-18 → 2026-08-20 A (+63d) | 2026-06-23 → 2026-09-28 A (+97d) | 0% → 100% | 49d → none |
| MH-3-P /MH-4-P | **MH-3-P /MH-4-P** | 2026-06-20 → 2026-08-20 (+61d) | 2026-08-03 → 2026-09-28 (+56d) |  |  |
| A78180 | Excavation | 2026-06-20 → 2026-08-20 A (+61d) | 2026-06-23 → 2026-09-28 A (+97d) | 0% → 100% | 69d → none |
| A78190 | Pipe Laying | 2026-06-24 → 2026-08-20 A (+57d) | 2026-07-02 → 2026-09-28 A (+88d) | 0% → 100% | 69d → none |
| A78200 | Install Manhole | 2026-06-24 → 2026-08-20 A (+57d) | 2026-06-28 → 2026-09-28 A (+92d) | 0% → 100% | 75d → none |
| A78210 | Testing & Inspection | 2026-07-04 → 2026-08-20 A (+47d) | 2026-07-05 → 2026-09-28 A (+85d) | 0% → 100% | 69d → none |
| A78220 | Backfilling & Compaction | 2026-07-29 → 2026-08-20 A (+22d) | 2026-08-03 → 2026-09-28 A (+56d) | 0% → 100% | 49d → none |
| MH-4-G /MH-5-G | **MH-4-G /MH-5-G** | 2026-04-20 → 2026-08-20 (+122d) | 2026-05-20 → 2026-09-28 (+131d) |  |  |
| A77530 | Excavation | 2026-04-20 → 2026-08-20 A (+122d) | 2026-04-23 → 2026-09-28 A (+158d) | 0% → 100% | 57d → none |
| A77540 | Pipe Laying | 2026-04-25 → 2026-08-20 A (+117d) | 2026-05-03 → 2026-09-28 A (+148d) | 0% → 100% | 57d → none |
| A77550 | Install Manhole | 2026-04-25 → 2026-08-20 A (+117d) | 2026-04-28 → 2026-09-28 A (+153d) | 0% → 100% | 63d → none |
| A77560 | Testing & Inspection | 2026-05-04 → 2026-08-20 A (+108d) | 2026-05-05 → 2026-09-28 A (+146d) | 0% → 100% | 57d → none |
| A77570 | Backfilling & Compaction | 2026-05-16 → 2026-08-20 A (+96d) | 2026-05-20 → 2026-09-28 A (+131d) | 0% → 100% | 49d → none |
| MH-4-L /MH-5-L | **MH-4-L /MH-5-L** | 2026-05-23 → 2026-08-20 (+89d) | 2026-06-29 → 2026-09-28 (+91d) |  |  |
| A77880 | Excavation | 2026-05-23 → 2026-08-20 A (+89d) | 2026-05-26 → 2026-09-28 A (+125d) | 0% → 100% | 63d → none |
| A77890 | Pipe Laying | 2026-05-27 → 2026-08-20 A (+85d) | 2026-06-04 → 2026-09-28 A (+116d) | 0% → 100% | 63d → none |
| A77900 | Install Manhole | 2026-05-27 → 2026-08-20 A (+85d) | 2026-05-31 → 2026-09-28 A (+120d) | 0% → 100% | 69d → none |
| A77910 | Testing & Inspection | 2026-06-06 → 2026-08-20 A (+75d) | 2026-06-07 → 2026-09-28 A (+113d) | 0% → 100% | 63d → none |
| A77920 | Backfilling & Compaction | 2026-06-24 → 2026-08-20 A (+57d) | 2026-06-29 → 2026-09-28 A (+91d) | 0% → 100% | 49d → none |
| MH-4-P / 0-P | **MH-4-P / 0-P** | 2026-06-24 → 2026-08-20 (+57d) | 2026-08-09 → 2026-09-28 (+50d) |  |  |
| A78230 | Excavation | 2026-06-24 → 2026-08-20 A (+57d) | 2026-06-28 → 2026-09-28 A (+92d) | 0% → 100% | 70d → none |
| A78240 | Pipe Laying | 2026-06-29 → 2026-08-20 A (+52d) | 2026-07-07 → 2026-09-28 A (+83d) | 0% → 100% | 70d → none |
| A78250 | Install Manhole | 2026-06-29 → 2026-08-20 A (+52d) | 2026-07-02 → 2026-09-28 A (+88d) | 0% → 100% | 76d → none |
| A78260 | Testing & Inspection | 2026-07-08 → 2026-08-20 A (+43d) | 2026-07-09 → 2026-09-28 A (+81d) | 0% → 100% | 70d → none |
| A78270 | Backfilling & Compaction | 2026-08-04 → 2026-08-20 A (+16d) | 2026-08-09 → 2026-09-28 A (+50d) | 0% → 100% | 49d → none |
| MH-5-G / 0-G | **MH-5-G / 0-G** | 2026-04-25 → 2026-08-20 (+117d) | 2026-05-26 → 2026-09-28 (+125d) |  |  |
| A77580 | Excavation | 2026-04-25 → 2026-08-20 A (+117d) | 2026-04-28 → 2026-09-28 A (+153d) | 0% → 100% | 58d → none |
| A77590 | Pipe Laying | 2026-04-29 → 2026-08-20 A (+113d) | 2026-05-07 → 2026-09-28 A (+144d) | 0% → 100% | 58d → none |
| A77600 | Install Manhole | 2026-04-29 → 2026-08-20 A (+113d) | 2026-05-03 → 2026-09-28 A (+148d) | 0% → 100% | 64d → none |
| A77610 | Testing & Inspection | 2026-05-09 → 2026-08-20 A (+103d) | 2026-05-10 → 2026-09-28 A (+141d) | 0% → 100% | 58d → none |

| ID | Task | Start | Finish | Complete | Total float |
| --- | --- | --- | --- | --- | --- |
| A77620 | Backfilling & Compaction | 2026-05-21 → 2026-08-20 A (+91d) | 2026-05-26 → 2026-09-28 A (+125d) | 0% → 100% | 49d → none |
| MH-5-G-1 /MH-5-G | **MH-5-G-1 /MH-5-G** | 2026-04-29 → 2026-08-20 (+113d) | 2026-06-01 → 2026-09-28 (+119d) |  |  |
| A77630 | Excavation | 2026-04-29 → 2026-08-20 A (+113d) | 2026-05-03 → 2026-09-28 A (+148d) | 0% → 100% | 59d → none |
| A77640 | Pipe Laying | 2026-05-04 → 2026-08-20 A (+108d) | 2026-05-12 → 2026-09-28 A (+139d) | 0% → 100% | 59d → none |
| A77650 | Install Manhole | 2026-05-04 → 2026-08-20 A (+108d) | 2026-05-07 → 2026-09-28 A (+144d) | 0% → 100% | 65d → none |
| A77660 | Testing & Inspection | 2026-05-13 → 2026-08-20 A (+99d) | 2026-05-14 → 2026-09-28 A (+137d) | 0% → 100% | 59d → none |
| A77670 | Backfilling & Compaction | 2026-05-27 → 2026-08-20 A (+85d) | 2026-06-01 → 2026-09-28 A (+119d) | 0% → 100% | 49d → none |
| MH-5-G-2 /MH-5-G-1 | **MH-5-G-2 /MH-5-G-1** | 2026-05-04 → 2026-08-20 (+108d) | 2026-06-06 → 2026-09-28 (+114d) |  |  |
| A77680 | Excavation | 2026-05-04 → 2026-08-20 A (+108d) | 2026-05-07 → 2026-09-28 A (+144d) | 0% → 100% | 60d → none |
| A77690 | Pipe Laying | 2026-05-09 → 2026-08-20 A (+103d) | 2026-05-17 → 2026-09-28 A (+134d) | 0% → 100% | 60d → none |
| A77700 | Install Manhole | 2026-05-09 → 2026-08-20 A (+103d) | 2026-05-12 → 2026-09-28 A (+139d) | 0% → 100% | 66d → none |
| A77710 | Testing & Inspection | 2026-05-18 → 2026-08-20 A (+94d) | 2026-05-19 → 2026-09-28 A (+132d) | 0% → 100% | 60d → none |
| A77720 | Backfilling & Compaction | 2026-06-02 → 2026-08-20 A (+79d) | 2026-06-06 → 2026-09-28 A (+114d) | 0% → 100% | 49d → none |
| MH-5-L / 0-L | **MH-5-L / 0-L** | 2026-05-27 → 2026-08-20 (+85d) | 2026-07-05 → 2026-09-28 (+85d) |  |  |
| A77930 | Excavation | 2026-05-27 → 2026-08-20 A (+85d) | 2026-05-31 → 2026-09-28 A (+120d) | 0% → 100% | 64d → none |
| A77940 | Pipe Laying | 2026-06-01 → 2026-08-20 A (+80d) | 2026-06-09 → 2026-09-28 A (+111d) | 0% → 100% | 64d → none |
| A77950 | Install Manhole | 2026-06-01 → 2026-08-20 A (+80d) | 2026-06-04 → 2026-09-28 A (+116d) | 0% → 100% | 70d → none |
| A77960 | Testing & Inspection | 2026-06-10 → 2026-08-20 A (+71d) | 2026-06-11 → 2026-09-28 A (+109d) | 0% → 100% | 64d → none |
| A77970 | Backfilling & Compaction | 2026-06-30 → 2026-08-20 A (+51d) | 2026-07-05 → 2026-09-28 A (+85d) | 0% → 100% | 49d → none |
| EX LR 03 | **EX LR 03** | 2026-06-29 → 2026-08-20 (+52d) | 2026-09-17 → 2026-09-28 (+11d) |  |  |
| MH-A35 /MH-A36 | **MH-A35 /MH-A36** | 2026-06-29 → 2026-08-20 (+52d) | 2026-07-23 → 2026-09-28 (+67d) |  |  |
| A79930 | Excavation | 2026-06-29 → 2026-08-20 A (+52d) | 2026-07-02 → 2026-09-28 A (+88d) | 0% → 100% | 100d → none |
| A79940 | Pipe Laying | 2026-07-04 → 2026-08-20 A (+47d) | 2026-07-12 → 2026-09-28 A (+78d) | 0% → 100% | 100d → none |
| A79950 | Install Manhole | 2026-07-04 → 2026-08-20 A (+47d) | 2026-07-07 → 2026-09-28 A (+83d) | 0% → 100% | 106d → none |
| A79960 | Testing & Inspection | 2026-07-13 → 2026-08-20 A (+38d) | 2026-07-14 → 2026-09-28 A (+76d) | 0% → 100% | 100d → none |
| A79970 | Backfilling & Compaction | 2026-07-15 → 2026-08-20 A (+36d) | 2026-07-23 → 2026-09-28 A (+67d) | 0% → 100% | 100d → none |
| MH-A36 /MH-A37 | **MH-A36 /MH-A37** | 2026-07-04 → 2026-08-20 (+47d) | 2026-08-02 → 2026-09-28 (+57d) |  |  |
| A79880 | Excavation | 2026-07-04 → 2026-08-20 A (+47d) | 2026-07-07 → 2026-09-28 A (+83d) | 0% → 100% | 104d → none |
| A79890 | Pipe Laying | 2026-07-08 → 2026-08-20 A (+43d) | 2026-07-16 → 2026-09-28 A (+74d) | 0% → 100% | 104d → none |
| A79900 | Install Manhole | 2026-07-08 → 2026-08-20 A (+43d) | 2026-07-12 → 2026-09-28 A (+78d) | 0% → 100% | 110d → none |
| A79910 | Testing & Inspection | 2026-07-18 → 2026-08-20 A (+33d) | 2026-07-19 → 2026-09-28 A (+71d) | 0% → 100% | 104d → none |
| A79920 | Backfilling & Compaction | 2026-07-25 → 2026-08-20 A (+26d) | 2026-08-02 → 2026-09-28 A (+57d) | 0% → 100% | 100d → none |
| MH-A37 /MH-A38 | **MH-A37 /MH-A38** | 2026-07-08 → 2026-08-20 (+43d) | 2026-08-11 → 2026-09-28 (+48d) |  |  |
| A79830 | Excavation | 2026-07-08 → 2026-08-20 A (+43d) | 2026-07-12 → 2026-09-28 A (+78d) | 0% → 100% | 108d → none |
| A79840 | Pipe Laying | 2026-07-13 → 2026-08-20 A (+38d) | 2026-07-21 → 2026-09-28 A (+69d) | 0% → 100% | 108d → none |
| A79850 | Install Manhole | 2026-07-13 → 2026-08-20 A (+38d) | 2026-07-16 → 2026-09-28 A (+74d) | 0% → 100% | 114d → none |
| A79860 | Testing & Inspection | 2026-07-22 → 2026-08-20 A (+29d) | 2026-07-23 → 2026-09-28 A (+67d) | 0% → 100% | 108d → none |
| A79870 | Backfilling & Compaction | 2026-08-03 → 2026-08-20 A (+17d) | 2026-08-11 → 2026-09-28 A (+48d) | 0% → 100% | 100d → none |
| MH-A38 /MH-A39 | **MH-A38 /MH-A39** | 2026-07-13 → 2026-08-20 (+38d) | 2026-08-20 → 2026-09-28 (+39d) |  |  |
| A79780 | Excavation | 2026-07-13 → 2026-08-20 A (+38d) | 2026-07-16 → 2026-09-28 A (+74d) | 0% → 100% | 112d → none |
| A79790 | Pipe Laying | 2026-07-18 → 2026-08-20 A (+33d) | 2026-07-26 → 2026-09-28 A (+64d) | 0% → 100% | 112d → none |
| A79800 | Install Manhole | 2026-07-18 → 2026-08-20 A (+33d) | 2026-07-21 → 2026-09-28 A (+69d) | 0% → 100% | 118d → none |
| A79810 | Testing & Inspection | 2026-07-27 → 2026-08-20 A (+24d) | 2026-07-28 → 2026-09-28 A (+62d) | 0% → 100% | 112d → none |
| A79820 | Backfilling & Compaction | 2026-08-12 → 2026-08-20 A (+8d) | 2026-08-20 → 2026-09-28 A (+39d) | 0% → 100% | 100d → none |
| MH-A39 /MH-A40 | **MH-A39 /MH-A40** | 2026-07-18 → 2026-08-20 (+33d) | 2026-08-30 → 2026-09-28 (+29d) |  |  |
| A79730 | Excavation | 2026-07-18 → 2026-08-20 A (+33d) | 2026-07-21 → 2026-09-28 A (+69d) | 0% → 100% | 116d → none |
| A79740 | Pipe Laying | 2026-07-22 → 2026-08-20 A (+29d) | 2026-07-30 → 2026-09-28 A (+60d) | 0% → 100% | 116d → none |
| A79750 | Install Manhole | 2026-07-22 → 2026-08-20 A (+29d) | 2026-07-26 → 2026-09-28 A (+64d) | 0% → 100% | 122d → none |
| A79760 | Testing & Inspection | 2026-08-01 → 2026-08-20 A (+19d) | 2026-08-02 → 2026-09-28 A (+57d) | 0% → 100% | 116d → none |
| A79770 | Backfilling & Compaction | 2026-08-22 → 2026-08-20 A (-2d) | 2026-08-30 → 2026-09-28 A (+29d) | 0% → 100% | 100d → none |
| MH-A40 /MH-A41 | **MH-A40 /MH-A41** | 2026-07-22 → 2026-08-20 (+29d) | 2026-09-08 → 2026-09-28 (+20d) |  |  |
| A79680 | Excavation | 2026-07-22 → 2026-08-20 A (+29d) | 2026-07-26 → 2026-09-28 A (+64d) | 0% → 100% | 120d → none |
| A79690 | Pipe Laying | 2026-07-27 → 2026-08-20 A (+24d) | 2026-08-04 → 2026-09-28 A (+55d) | 0% → 100% | 120d → none |
| A79700 | Install Manhole | 2026-07-27 → 2026-08-20 A (+24d) | 2026-07-30 → 2026-09-28 A (+60d) | 0% → 100% | 126d → none |
| A79710 | Testing & Inspection | 2026-08-05 → 2026-08-20 A (+15d) | 2026-08-06 → 2026-09-28 A (+53d) | 0% → 100% | 120d → none |
| A79720 | Backfilling & Compaction | 2026-08-31 → 2026-08-20 A (-11d) | 2026-09-08 → 2026-09-28 A (+20d) | 0% → 100% | 100d → none |
| MH-A41 /MH-A42 | **MH-A41 /MH-A42** | 2026-07-27 → 2026-08-20 (+24d) | 2026-09-17 → 2026-09-28 (+11d) |  |  |
| A79630 | Excavation | 2026-07-27 → 2026-08-20 A (+24d) | 2026-07-30 → 2026-09-28 A (+60d) | 0% → 100% | 124d → none |
| A79640 | Pipe Laying | 2026-08-01 → 2026-08-20 A (+19d) | 2026-08-09 → 2026-09-28 A (+50d) | 0% → 100% | 124d → none |
| A79650 | Install Manhole | 2026-08-01 → 2026-08-20 A (+19d) | 2026-08-04 → 2026-09-28 A (+55d) | 0% → 100% | 130d → none |
| A79660 | Testing & Inspection | 2026-08-10 → 2026-08-20 A (+10d) | 2026-08-11 → 2026-09-28 A (+48d) | 0% → 100% | 124d → none |
| A79670 | Backfilling & Compaction | 2026-09-09 → 2026-08-20 A (-20d) | 2026-09-17 → 2026-09-28 A (+11d) | 0% → 100% | 100d → none |
| A R L-1 | **A R L-1** | 2026-03-17 → 2026-08-20 (+156d) | 2026-07-27 → 2026-11-17 (+113d) |  |  |
| MH-1-Q /MH-2-Q | **MH-1-Q /MH-2-Q** | 2026-03-17 → 2026-08-20 (+156d) | 2026-04-13 → 2026-10-25 (+195d) |  |  |
| A67080 | Excavation | 2026-03-17 → 2026-08-20 A (+156d) | 2026-03-21 → 2026-09-28 A (+191d) | 0% → 100% | 80d → none |
| A67090 | Pipe Laying | 2026-03-22 → 2026-10-03 (+195d) | 2026-03-30 → 2026-10-11 (+195d) |  | 80d → -11d |
| A67100 | Install Manhole | 2026-03-22 → 2026-10-03 (+195d) | 2026-03-25 → 2026-10-06 (+195d) |  | 86d → -5d |
| A67110 | Testing & Inspection | 2026-03-31 → 2026-10-12 (+195d) | 2026-04-01 → 2026-10-13 (+195d) |  | 80d → -11d |
| A67120 | Backfilling & Compaction | 2026-04-02 → 2026-10-14 (+195d) | 2026-04-13 → 2026-10-25 (+195d) |  | 80d → -11d |
| MH-10-Q /MH-11-Q | **MH-10-Q /MH-11-Q** | 2026-04-28 → 2026-10-07 (+162d) | 2026-07-27 → 2026-11-17 (+113d) |  |  |

| ID | Task | Start | Finish | Complete | Total float |
| --- | --- | --- | --- | --- | --- |
| A67330 | Excavation | 2026-04-28 → 2026-10-07 (+162d) | 2026-05-02 → 2026-10-11 (+162d) |  | 193d → 68d |
| A67340 | Pipe Laying | 2026-05-03 → 2026-10-12 (+162d) | 2026-05-18 → 2026-10-27 (+162d) |  | 193d → 68d |
| A67350 | Install Manhole | 2026-05-03 → 2026-10-12 (+162d) | 2026-05-06 → 2026-10-15 (+162d) |  | 205d → 80d |
| A67360 | Testing & Inspection | 2026-05-19 → 2026-10-28 (+162d) | 2026-05-20 → 2026-10-29 (+162d) |  | 193d → 68d |
| A67370 | Backfilling & Compaction | 2026-07-16 → 2026-11-07 (+114d) | 2026-07-27 → 2026-11-17 (+113d) |  | 145d → 62d |
| MH-2-Q /MH-3-Q | **MH-2-Q /MH-3-Q** | 2026-03-22 → 2026-08-20 (+151d) | 2026-04-25 → 2026-10-04 (+162d) |  |  |
| A67130 | Excavation | 2026-03-22 → 2026-08-20 A (+151d) | 2026-03-25 → 2026-09-28 A (+187d) | 0% → 100% | 145d → none |
| A67140 | Pipe Laying | 2026-03-26 → 2026-08-20 A (+147d) | 2026-04-11 → 2026-09-28 A (+170d) | 0% → 100% | 145d → none |
| A67150 | Install Manhole | 2026-03-26 → 2026-08-20 A (+147d) | 2026-03-30 → 2026-09-28 A (+182d) | 0% → 100% | 157d → none |
| A67170 | Backfilling & Compaction | 2026-04-14 → 2026-08-20 A (+128d) | 2026-04-25 → 2026-09-28 A (+156d) | 0% → 100% | 145d → none |
| A67160 | Testing & Inspection | 2026-04-12 → 2026-10-03 (+174d) | 2026-04-13 → 2026-10-04 (+174d) |  | 145d → 80d |
| MH-3-Q /MH-4-Q | **MH-3-Q /MH-4-Q** | 2026-03-26 → 2026-08-20 (+147d) | 2026-05-06 → 2026-10-04 (+151d) |  |  |
| A67180 | Excavation | 2026-03-26 → 2026-08-20 A (+147d) | 2026-03-30 → 2026-09-28 A (+182d) | 0% → 100% | 151d → none |
| A67190 | Pipe Laying | 2026-03-31 → 2026-08-20 A (+142d) | 2026-04-15 → 2026-09-28 A (+166d) | 0% → 100% | 151d → none |
| A67200 | Install Manhole | 2026-03-31 → 2026-08-20 A (+142d) | 2026-04-04 → 2026-09-28 A (+177d) | 0% → 100% | 163d → none |
| A67220 | Backfilling & Compaction | 2026-04-26 → 2026-08-20 A (+116d) | 2026-05-06 → 2026-09-28 A (+145d) | 0% → 100% | 145d → none |
| A67210 | Testing & Inspection | 2026-04-16 → 2026-10-03 (+170d) | 2026-04-18 → 2026-10-04 (+169d) |  | 151d → 80d |
| MH-4-Q /MH-5-Q | **MH-4-Q /MH-5-Q** | 2026-03-31 → 2026-08-20 (+142d) | 2026-05-18 → 2026-10-04 (+139d) |  |  |
| A67230 | Excavation | 2026-03-31 → 2026-08-20 A (+142d) | 2026-04-04 → 2026-09-28 A (+177d) | 0% → 100% | 157d → none |
| A67240 | Pipe Laying | 2026-04-05 → 2026-08-20 A (+137d) | 2026-04-20 → 2026-09-28 A (+161d) | 0% → 100% | 157d → none |
| A67250 | Install Manhole | 2026-04-05 → 2026-08-20 A (+137d) | 2026-04-08 → 2026-09-28 A (+173d) | 0% → 100% | 169d → none |
| A67270 | Backfilling & Compaction | 2026-05-07 → 2026-08-20 A (+105d) | 2026-05-18 → 2026-09-28 A (+133d) | 0% → 100% | 145d → none |
| A67260 | Testing & Inspection | 2026-04-21 → 2026-10-03 (+165d) | 2026-04-22 → 2026-10-04 (+165d) |  | 157d → 80d |
| MH-5-Q /MH-6-Q | **MH-5-Q /MH-6-Q** | 2026-04-05 → 2026-08-20 (+137d) | 2026-05-30 → 2026-10-04 (+127d) |  |  |
| A67280 | Excavation | 2026-04-05 → 2026-08-20 A (+137d) | 2026-04-08 → 2026-09-28 A (+173d) | 0% → 100% | 163d → none |
| A67290 | Pipe Laying | 2026-04-09 → 2026-08-20 A (+133d) | 2026-04-25 → 2026-09-28 A (+156d) | 0% → 100% | 163d → none |
| A67300 | Install Manhole | 2026-04-09 → 2026-08-20 A (+133d) | 2026-04-13 → 2026-09-28 A (+168d) | 0% → 100% | 175d → none |
| A67320 | Backfilling & Compaction | 2026-05-19 → 2026-08-20 A (+93d) | 2026-05-30 → 2026-09-28 A (+121d) | 0% → 100% | 145d → none |
| A67310 | Testing & Inspection | 2026-04-26 → 2026-10-03 (+160d) | 2026-04-27 → 2026-10-04 (+160d) |  | 163d → 80d |
| MH-6-Q /MH-7-Q | **MH-6-Q /MH-7-Q** | 2026-04-09 → 2026-08-20 (+133d) | 2026-06-10 → 2026-10-04 (+116d) |  |  |
| A67430 | Excavation | 2026-04-09 → 2026-08-20 A (+133d) | 2026-04-13 → 2026-09-28 A (+168d) | 0% → 100% | 169d → none |
| A67440 | Pipe Laying | 2026-04-14 → 2026-08-20 A (+128d) | 2026-04-29 → 2026-09-28 A (+152d) | 0% → 100% | 169d → none |
| A67450 | Install Manhole | 2026-04-14 → 2026-08-20 A (+128d) | 2026-04-18 → 2026-09-28 A (+163d) | 0% → 100% | 181d → none |
| A67470 | Backfilling & Compaction | 2026-05-31 → 2026-08-20 A (+81d) | 2026-06-10 → 2026-09-28 A (+110d) | 0% → 100% | 145d → none |
| A67460 | Testing & Inspection | 2026-04-30 → 2026-10-03 (+156d) | 2026-05-02 → 2026-10-04 (+155d) |  | 169d → 80d |
| MH-7-Q /MH-8-Q | **MH-7-Q /MH-8-Q** | 2026-04-14 → 2026-08-20 (+128d) | 2026-06-22 → 2026-10-04 (+104d) |  |  |
| A67480 | Excavation | 2026-04-14 → 2026-08-20 A (+128d) | 2026-04-18 → 2026-09-28 A (+163d) | 0% → 100% | 175d → none |
| A67490 | Pipe Laying | 2026-04-19 → 2026-08-20 A (+123d) | 2026-05-04 → 2026-09-28 A (+147d) | 0% → 100% | 175d → none |
| A67500 | Install Manhole | 2026-04-19 → 2026-08-20 A (+123d) | 2026-04-22 → 2026-09-28 A (+159d) | 0% → 100% | 187d → none |
| A67520 | Backfilling & Compaction | 2026-06-11 → 2026-08-20 A (+70d) | 2026-06-22 → 2026-09-28 A (+98d) | 0% → 100% | 145d → none |
| A67510 | Testing & Inspection | 2026-05-05 → 2026-10-03 (+151d) | 2026-05-06 → 2026-10-04 (+151d) |  | 175d → 80d |
| MH-8-Q /MH-9-Q | **MH-8-Q /MH-9-Q** | 2026-04-19 → 2026-08-20 (+123d) | 2026-07-04 → 2026-10-04 (+92d) |  |  |
| A67530 | Excavation | 2026-04-19 → 2026-08-20 A (+123d) | 2026-04-22 → 2026-09-28 A (+159d) | 0% → 100% | 181d → none |
| A67540 | Pipe Laying | 2026-04-23 → 2026-08-20 A (+119d) | 2026-05-09 → 2026-09-28 A (+142d) | 0% → 100% | 181d → none |
| A67550 | Install Manhole | 2026-04-23 → 2026-08-20 A (+119d) | 2026-04-27 → 2026-09-28 A (+154d) | 0% → 100% | 193d → none |
| A67570 | Backfilling & Compaction | 2026-06-23 → 2026-08-20 A (+58d) | 2026-07-04 → 2026-09-28 A (+86d) | 0% → 100% | 145d → none |
| A67560 | Testing & Inspection | 2026-05-10 → 2026-10-03 (+146d) | 2026-05-11 → 2026-10-04 (+146d) |  | 181d → 80d |
| MH-9-Q /MH-10-Q | **MH-9-Q /MH-10-Q** | 2026-04-23 → 2026-10-03 (+163d) | 2026-07-15 → 2026-11-05 (+113d) |  |  |
| A67380 | Excavation | 2026-04-23 → 2026-10-03 (+163d) | 2026-04-27 → 2026-10-06 (+162d) |  | 187d → 62d |
| A67390 | Pipe Laying | 2026-04-28 → 2026-10-07 (+162d) | 2026-05-13 → 2026-10-22 (+162d) |  | 187d → 62d |
| A67400 | Install Manhole | 2026-04-28 → 2026-10-07 (+162d) | 2026-05-02 → 2026-10-11 (+162d) |  | 199d → 74d |
| A67410 | Testing & Inspection | 2026-05-14 → 2026-10-24 (+163d) | 2026-05-16 → 2026-10-25 (+162d) |  | 187d → 62d |
| A67420 | Backfilling & Compaction | 2026-07-05 → 2026-10-26 (+113d) | 2026-07-15 → 2026-11-05 (+113d) |  | 145d → 62d |
| EX LR 26 | **EX LR 26** | 2026-03-18 → 2026-08-20 (+155d) | 2026-05-03 → 2026-10-05 (+155d) |  |  |
| MH-12-O /MH-13-O | **MH-12-O /MH-13-O** | 2026-03-18 → 2026-08-20 (+155d) | 2026-04-21 → 2026-10-05 (+167d) |  |  |
| A78630 | Excavation | 2026-03-18 → 2026-08-20 A (+155d) | 2026-03-22 → 2026-09-28 A (+190d) | 0% → 100% | 5d → none |
| A78640 | Pipe Laying | 2026-03-23 → 2026-08-20 A (+150d) | 2026-04-07 → 2026-09-28 A (+174d) | 0% → 100% | 218d → none |
| A78650 | Install Manhole | 2026-03-23 → 2026-08-20 A (+150d) | 2026-03-26 → 2026-09-28 A (+186d) | 0% → 100% | 230d → none |
| A78670 | Backfilling & Compaction | 2026-04-11 → 2026-08-20 A (+131d) | 2026-04-21 → 2026-09-28 A (+160d) | 0% → 100% | 218d → none |
| A78660 | Testing & Inspection | 2026-04-08 → 2026-10-03 (+178d) | 2026-04-09 → 2026-10-05 (+179d) |  | 218d → 99.8d |
| MH-13-O /MH-O-0 | **MH-13-O /MH-O-0** | 2026-03-23 → 2026-08-20 (+150d) | 2026-05-03 → 2026-09-28 (+148d) |  |  |
| A78680 | Excavation | 2026-03-23 → 2026-08-20 A (+150d) | 2026-03-26 → 2026-09-28 A (+186d) | 0% → 100% | 5d → none |
| A78690 | Pipe Laying | 2026-03-28 → 2026-08-20 A (+145d) | 2026-04-12 → 2026-09-28 A (+169d) | 0% → 100% | 224d → none |
| A78700 | Install Manhole | 2026-03-28 → 2026-08-20 A (+145d) | 2026-03-31 → 2026-09-28 A (+181d) | 0% → 100% | 236d → none |
| A78710 | Testing & Inspection | 2026-04-13 → 2026-08-20 A (+129d) | 2026-04-14 → 2026-09-28 A (+167d) | 0% → 100% | 224d → none |
| A78720 | Backfilling & Compaction | 2026-04-22 → 2026-08-20 A (+120d) | 2026-05-03 → 2026-09-28 A (+148d) | 0% → 100% | 218d → none |
| LR 18 | **LR 18** | 2026-01-24 → 2026-08-20 (+208d) | 2026-03-31 → 2026-10-04 (+187d) |  |  |
| MH-1-B /MH-2-B | **MH-1-B /MH-2-B** | 2026-01-24 → 2026-08-20 (+208d) | 2026-03-08 → 2026-10-04 (+210d) |  |  |
| A78730 | Excavation | 2026-01-24 → 2026-08-20 A (+208d) | 2026-01-27 → 2026-09-28 A (+244d) | 0% → 100% | 173d → none |
| A78740 | Pipe Laying | 2026-02-14 → 2026-08-20 A (+187d) | 2026-03-01 → 2026-09-28 A (+211d) | 0% → 100% | 159d → none |

| ID | Task | Start | Finish | Complete | Total float |
| --- | --- | --- | --- | --- | --- |
| A78750 | Install Manhole | 2026-01-28 → 2026-08-20 A (+204d) | 2026-02-01 → 2026-09-28 A (+239d) | 0% → 100% | 185d → none |
| A78770 | Backfilling & Compaction | 2026-03-04 → 2026-08-20 A (+169d) | 2026-03-08 → 2026-09-28 A (+204d) | 0% → 100% | 159d → none |
| A78760 | Testing & Inspection | 2026-03-02 → 2026-10-03 (+215d) | 2026-03-03 → 2026-10-04 (+215d) |  | 159d → 57d |
| MH-2-B /MH-3-B | **MH-2-B /MH-3-B** | 2026-01-28 → 2026-08-20 (+204d) | 2026-03-19 → 2026-10-04 (+199d) |  |  |
| A78780 | Excavation | 2026-01-28 → 2026-08-20 A (+204d) | 2026-02-01 → 2026-09-28 A (+239d) | 0% → 100% | 185d → none |
| A78790 | Pipe Laying | 2026-02-02 → 2026-08-20 A (+199d) | 2026-02-17 → 2026-09-28 A (+223d) | 0% → 100% | 185d → none |
| A78800 | Install Manhole | 2026-02-02 → 2026-08-20 A (+199d) | 2026-02-05 → 2026-09-28 A (+235d) | 0% → 100% | 197d → none |
| A78820 | Backfilling & Compaction | 2026-03-09 → 2026-08-20 A (+164d) | 2026-03-19 → 2026-09-28 A (+193d) | 0% → 100% | 171d → none |
| A78810 | Testing & Inspection | 2026-02-18 → 2026-10-03 (+227d) | 2026-02-19 → 2026-10-04 (+227d) |  | 185d → 57d |
| MH-3-B /MH-4-B | **MH-3-B /MH-4-B** | 2026-02-02 → 2026-08-20 (+199d) | 2026-03-31 → 2026-10-04 (+187d) |  |  |
| A78830 | Excavation | 2026-02-02 → 2026-08-20 A (+199d) | 2026-02-05 → 2026-09-28 A (+235d) | 0% → 100% | 191d → none |
| A78840 | Pipe Laying | 2026-02-07 → 2026-08-20 A (+194d) | 2026-02-22 → 2026-09-28 A (+218d) | 0% → 100% | 191d → none |
| A78850 | Install Manhole | 2026-02-07 → 2026-08-20 A (+194d) | 2026-02-10 → 2026-09-28 A (+230d) | 0% → 100% | 203d → none |
| A78870 | Backfilling & Compaction | 2026-03-21 → 2026-08-20 A (+152d) | 2026-03-31 → 2026-09-28 A (+181d) | 0% → 100% | 171d → none |
| A78860 | Testing & Inspection | 2026-02-23 → 2026-10-03 (+222d) | 2026-02-24 → 2026-10-04 (+222d) |  | 191d → 57d |
| LR 19 | **LR 19** | 2026-01-24 → 2026-08-20 (+208d) | 2026-03-31 → 2026-09-28 (+181d) |  |  |
| MH-4-B /MH-5-B | **MH-4-B /MH-5-B** | 2026-01-28 → 2026-08-20 (+204d) | 2026-03-15 → 2026-09-28 (+197d) |  |  |
| A78930 | Excavation | 2026-01-28 → 2026-08-20 A (+204d) | 2026-02-01 → 2026-09-28 A (+239d) | 0% → 100% | 187d → none |
| A78940 | Pipe Laying | 2026-02-02 → 2026-08-20 A (+199d) | 2026-02-17 → 2026-09-28 A (+223d) | 0% → 100% | 187d → none |
| A78950 | Install Manhole | 2026-02-02 → 2026-08-20 A (+199d) | 2026-02-05 → 2026-09-28 A (+235d) | 0% → 100% | 199d → none |
| A78960 | Testing & Inspection | 2026-02-18 → 2026-08-20 A (+183d) | 2026-02-19 → 2026-09-28 A (+221d) | 0% → 100% | 187d → none |
| A78970 | Backfilling & Compaction | 2026-03-04 → 2026-08-20 A (+169d) | 2026-03-15 → 2026-09-28 A (+197d) | 0% → 100% | 177d → none |
| MH-4-B-1 /MH-4-B | **MH-4-B-1 /MH-4-B** | 2026-01-24 → 2026-08-20 (+208d) | 2026-03-03 → 2026-09-28 (+209d) |  |  |
| A78880 | Excavation | 2026-01-24 → 2026-08-20 A (+208d) | 2026-01-27 → 2026-09-28 A (+244d) | 0% → 100% | 175d → none |
| A78890 | Pipe Laying | 2026-02-02 → 2026-08-20 A (+199d) | 2026-02-17 → 2026-09-28 A (+223d) | 0% → 100% | 171d → none |
| A78900 | Install Manhole | 2026-01-28 → 2026-08-20 A (+204d) | 2026-02-01 → 2026-09-28 A (+239d) | 0% → 100% | 187d → none |
| A78910 | Testing & Inspection | 2026-02-18 → 2026-08-20 A (+183d) | 2026-02-19 → 2026-09-28 A (+221d) | 0% → 100% | 171d → none |
| A78920 | Backfilling & Compaction | 2026-02-21 → 2026-08-20 A (+180d) | 2026-03-03 → 2026-09-28 A (+209d) | 0% → 100% | 171d → none |
| MH-5-B /MH-6-B | **MH-5-B /MH-6-B** | 2026-02-02 → 2026-08-20 (+199d) | 2026-03-19 → 2026-09-28 (+193d) |  |  |
| A78980 | Excavation | 2026-02-02 → 2026-08-20 A (+199d) | 2026-02-05 → 2026-09-28 A (+235d) | 0% → 100% | 193d → none |
| A78990 | Pipe Laying | 2026-02-07 → 2026-08-20 A (+194d) | 2026-02-22 → 2026-09-28 A (+218d) | 0% → 100% | 193d → none |
| A79000 | Install Manhole | 2026-02-07 → 2026-08-20 A (+194d) | 2026-02-10 → 2026-09-28 A (+230d) | 0% → 100% | 205d → none |
| A79010 | Testing & Inspection | 2026-02-23 → 2026-08-20 A (+178d) | 2026-02-24 → 2026-09-28 A (+216d) | 0% → 100% | 193d → none |
| A79020 | Backfilling & Compaction | 2026-03-16 → 2026-08-20 A (+157d) | 2026-03-19 → 2026-09-28 A (+193d) | 0% → 100% | 177d → none |
| MH-6-B / 0-B | **MH-6-B / 0-B** | 2026-02-07 → 2026-08-20 (+194d) | 2026-03-31 → 2026-09-28 (+181d) |  |  |
| A79030 | Excavation | 2026-02-07 → 2026-08-20 A (+194d) | 2026-02-10 → 2026-09-28 A (+230d) | 0% → 100% | 193d → none |
| A79040 | Pipe Laying | 2026-02-11 → 2026-08-20 A (+190d) | 2026-02-26 → 2026-09-28 A (+214d) | 0% → 100% | 193d → none |
| A79050 | Install Manhole | 2026-02-11 → 2026-08-20 A (+190d) | 2026-02-15 → 2026-09-28 A (+225d) | 0% → 100% | 205d → none |
| A79060 | Testing & Inspection | 2026-02-28 → 2026-08-20 A (+173d) | 2026-03-01 → 2026-09-28 A (+211d) | 0% → 100% | 193d → none |
| A79070 | Backfilling & Compaction | 2026-03-21 → 2026-08-20 A (+152d) | 2026-03-31 → 2026-09-28 A (+181d) | 0% → 100% | 177d → none |
| LR 20 | **LR 20** | 2026-01-22 → 2026-08-20 (+210d) | 2026-04-12 → 2026-10-04 (+175d) |  |  |
| MH-1-D /MH-2-D | **MH-1-D /MH-2-D** | 2026-01-22 → 2026-08-20 (+210d) | 2026-03-03 → 2026-09-28 (+209d) |  |  |
| A79080 | Excavation | 2026-01-22 → 2026-08-20 A (+210d) | 2026-01-26 → 2026-09-28 A (+245d) | 0% → 100% | 166d → none |
| A79090 | Pipe Laying | 2026-02-02 → 2026-08-20 A (+199d) | 2026-02-17 → 2026-09-28 A (+223d) | 0% → 100% | 161d → none |
| A79100 | Install Manhole | 2026-01-27 → 2026-08-20 A (+205d) | 2026-01-31 → 2026-09-28 A (+240d) | 0% → 100% | 178d → none |
| A79110 | Testing & Inspection | 2026-02-18 → 2026-08-20 A (+183d) | 2026-02-19 → 2026-09-28 A (+221d) | 0% → 100% | 161d → none |
| A79120 | Backfilling & Compaction | 2026-02-21 → 2026-08-20 A (+180d) | 2026-03-03 → 2026-09-28 A (+209d) | 0% → 100% | 161d → none |
| MH-2-D /MH-3-D | **MH-2-D /MH-3-D** | 2026-01-27 → 2026-08-20 (+205d) | 2026-03-15 → 2026-09-28 (+197d) |  |  |
| A79130 | Excavation | 2026-01-27 → 2026-08-20 A (+205d) | 2026-01-31 → 2026-09-28 A (+240d) | 0% → 100% | 172d → none |
| A79140 | Pipe Laying | 2026-02-02 → 2026-08-20 A (+199d) | 2026-02-17 → 2026-09-28 A (+223d) | 0% → 100% | 171d → none |
| A79150 | Install Manhole | 2026-02-01 → 2026-08-20 A (+200d) | 2026-02-04 → 2026-09-28 A (+236d) | 0% → 100% | 184d → none |
| A79160 | Testing & Inspection | 2026-02-18 → 2026-08-20 A (+183d) | 2026-02-19 → 2026-09-28 A (+221d) | 0% → 100% | 171d → none |
| A79170 | Backfilling & Compaction | 2026-03-04 → 2026-08-20 A (+169d) | 2026-03-15 → 2026-09-28 A (+197d) | 0% → 100% | 161d → none |
| MH-3-D /MH-4-D | **MH-3-D /MH-4-D** | 2026-02-01 → 2026-08-20 (+200d) | 2026-03-19 → 2026-10-04 (+199d) |  |  |
| A79180 | Excavation | 2026-02-01 → 2026-08-20 A (+200d) | 2026-02-04 → 2026-09-28 A (+236d) | 0% → 100% | 178d → none |
| A79190 | Pipe Laying | 2026-02-05 → 2026-08-20 A (+196d) | 2026-02-21 → 2026-09-28 A (+219d) | 0% → 100% | 178d → none |
| A79200 | Install Manhole | 2026-02-05 → 2026-08-20 A (+196d) | 2026-02-09 → 2026-09-28 A (+231d) | 0% → 100% | 190d → none |
| A79220 | Backfilling & Compaction | 2026-03-16 → 2026-08-20 A (+157d) | 2026-03-19 → 2026-09-28 A (+193d) | 0% → 100% | 161d → none |
| A79210 | Testing & Inspection | 2026-02-22 → 2026-10-03 (+223d) | 2026-02-23 → 2026-10-04 (+223d) |  | 178d → 57d |
| MH-4-D /MH-5-D | **MH-4-D /MH-5-D** | 2026-02-05 → 2026-08-20 (+196d) | 2026-03-31 → 2026-10-04 (+187d) |  |  |
| A79230 | Excavation | 2026-02-05 → 2026-08-20 A (+196d) | 2026-02-09 → 2026-09-28 A (+231d) | 0% → 100% | 178d → none |
| A79240 | Pipe Laying | 2026-02-10 → 2026-08-20 A (+191d) | 2026-02-25 → 2026-09-28 A (+215d) | 0% → 100% | 178d → none |
| A79250 | Install Manhole | 2026-02-10 → 2026-08-20 A (+191d) | 2026-02-14 → 2026-09-28 A (+226d) | 0% → 100% | 190d → none |
| A79270 | Backfilling & Compaction | 2026-03-21 → 2026-08-20 A (+152d) | 2026-03-31 → 2026-09-28 A (+181d) | 0% → 100% | 161d → none |
| A79260 | Testing & Inspection | 2026-02-26 → 2026-10-03 (+219d) | 2026-02-28 → 2026-10-04 (+218d) |  | 178d → 57d |
| MH-5-D /MH-6-D | **MH-5-D /MH-6-D** | 2026-02-10 → 2026-08-20 (+191d) | 2026-04-12 → 2026-10-04 (+175d) |  |  |
| A79280 | Excavation | 2026-02-10 → 2026-08-20 A (+191d) | 2026-02-14 → 2026-09-28 A (+226d) | 0% → 100% | 184d → none |
| A79290 | Pipe Laying | 2026-02-15 → 2026-08-20 A (+186d) | 2026-03-02 → 2026-09-28 A (+210d) | 0% → 100% | 184d → none |
| A79300 | Install Manhole | 2026-02-15 → 2026-08-20 A (+186d) | 2026-02-18 → 2026-09-28 A (+222d) | 0% → 100% | 196d → none |
| A79320 | Backfilling & Compaction | 2026-04-01 → 2026-08-20 A (+141d) | 2026-04-12 → 2026-09-28 A (+169d) | 0% → 100% | 161d → none |

| ID | Task | Start | Finish | Complete | Total float |
| --- | --- | --- | --- | --- | --- |
| A79310 | Testing & Inspection | 2026-03-03 → 2026-10-03 (+214d) | 2026-03-04 → 2026-10-04 (+214d) |  | 184d → 57d |
| LR 21 | **LR 21** | 2026-01-27 → 2026-08-20 (+205d) | 2026-04-12 → 2026-11-01 (+203d) |  |  |
| MH-2-F /MH-3-F | **MH-2-F /MH-3-F** | 2026-02-01 → 2026-08-20 (+200d) | 2026-03-15 → 2026-09-28 (+197d) |  |  |
| A79380 | Excavation | 2026-02-01 → 2026-08-20 A (+200d) | 2026-02-04 → 2026-09-28 A (+236d) | 0% → 100% | 168d → none |
| A79390 | Pipe Laying | 2026-02-05 → 2026-08-20 A (+196d) | 2026-02-21 → 2026-09-28 A (+219d) | 0% → 100% | 168d → none |
| A79400 | Install Manhole | 2026-02-05 → 2026-08-20 A (+196d) | 2026-02-09 → 2026-09-28 A (+231d) | 0% → 100% | 180d → none |
| A79410 | Testing & Inspection | 2026-02-22 → 2026-08-20 A (+179d) | 2026-02-23 → 2026-09-28 A (+217d) | 0% → 100% | 168d → none |
| A79420 | Backfilling & Compaction | 2026-03-04 → 2026-08-20 A (+169d) | 2026-03-15 → 2026-09-28 A (+197d) | 0% → 100% | 161d → none |
| MH-3-F /MH-4-F | **MH-3-F /MH-4-F** | 2026-02-05 → 2026-08-20 (+196d) | 2026-03-19 → 2026-09-28 (+193d) |  |  |
| A79430 | Excavation | 2026-02-05 → 2026-08-20 A (+196d) | 2026-02-09 → 2026-09-28 A (+231d) | 0% → 100% | 174d → none |
| A79440 | Pipe Laying | 2026-02-10 → 2026-08-20 A (+191d) | 2026-02-25 → 2026-09-28 A (+215d) | 0% → 100% | 174d → none |
| A79450 | Install Manhole | 2026-02-10 → 2026-08-20 A (+191d) | 2026-02-14 → 2026-09-28 A (+226d) | 0% → 100% | 186d → none |
| A79460 | Testing & Inspection | 2026-02-26 → 2026-08-20 A (+175d) | 2026-02-28 → 2026-09-28 A (+212d) | 0% → 100% | 174d → none |
| A79470 | Backfilling & Compaction | 2026-03-16 → 2026-08-20 A (+157d) | 2026-03-19 → 2026-09-28 A (+193d) | 0% → 100% | 161d → none |
| MH-4-F /MH-5-F | **MH-4-F /MH-5-F** | 2026-02-10 → 2026-08-20 (+191d) | 2026-03-31 → 2026-09-28 (+181d) |  |  |
| A79480 | Excavation | 2026-02-10 → 2026-08-20 A (+191d) | 2026-02-14 → 2026-09-28 A (+226d) | 0% → 100% | 174d → none |
| A79490 | Pipe Laying | 2026-02-15 → 2026-08-20 A (+186d) | 2026-03-02 → 2026-09-28 A (+210d) | 0% → 100% | 174d → none |
| A79500 | Install Manhole | 2026-02-15 → 2026-08-20 A (+186d) | 2026-02-18 → 2026-09-28 A (+222d) | 0% → 100% | 186d → none |
| A79510 | Testing & Inspection | 2026-03-03 → 2026-08-20 A (+170d) | 2026-03-04 → 2026-09-28 A (+208d) | 0% → 100% | 174d → none |
| A79520 | Backfilling & Compaction | 2026-03-21 → 2026-08-20 A (+152d) | 2026-03-31 → 2026-09-28 A (+181d) | 0% → 100% | 161d → none |
| MH-5-F / 0-F | **MH-5-F / 0-F** | 2026-02-15 → 2026-08-20 (+186d) | 2026-04-12 → 2026-09-28 (+169d) |  |  |
| A79530 | Excavation | 2026-02-15 → 2026-08-20 A (+186d) | 2026-02-18 → 2026-09-28 A (+222d) | 0% → 100% | 190d → none |
| A79540 | Pipe Laying | 2026-02-19 → 2026-08-20 A (+182d) | 2026-02-23 → 2026-09-28 A (+217d) | 0% → 100% | 190d → none |
| A79550 | Install Manhole | 2026-02-19 → 2026-08-20 A (+182d) | 2026-02-23 → 2026-09-28 A (+217d) | 0% → 100% | 192d → none |
| A79560 | Testing & Inspection | 2026-02-24 → 2026-08-20 A (+177d) | 2026-02-25 → 2026-09-28 A (+215d) | 0% → 100% | 190d → none |
| A79570 | Backfilling & Compaction | 2026-04-01 → 2026-08-20 A (+141d) | 2026-04-12 → 2026-09-28 A (+169d) | 0% → 100% | 161d → none |
| MH-8-O-1 /MH-2-F | **MH-8-O-1 /MH-2-F** | 2026-01-27 → 2026-08-20 (+205d) | 2026-03-03 → 2026-11-01 (+243d) |  |  |
| A79330 | Excavation | 2026-01-27 → 2026-08-20 A (+205d) | 2026-01-31 → 2026-09-28 A (+240d) | 0% → 100% | 162d → none |
| A79340 | Pipe Laying | 2026-02-02 → 2026-10-03 (+243d) | 2026-02-17 → 2026-10-18 (+243d) |  | 161d → 18.44d |
| A79350 | Install Manhole | 2026-02-01 → 2026-10-03 (+244d) | 2026-02-04 → 2026-10-06 (+244d) |  | 174d → 30.44d |
| A79360 | Testing & Inspection | 2026-02-18 → 2026-10-19 (+243d) | 2026-02-19 → 2026-10-20 (+243d) |  | 161d → 18.44d |
| A79370 | Backfilling & Compaction | 2026-02-21 → 2026-10-21 (+242d) | 2026-03-03 → 2026-11-01 (+243d) |  | 161d → 18.44d |
| LR 22 | **LR 22** | 2026-02-01 → 2026-08-20 (+200d) | 2026-03-31 → 2026-10-04 (+187d) |  |  |
| MH-1-H /MH-2-H | **MH-1-H /MH-2-H** | 2026-02-01 → 2026-08-20 (+200d) | 2026-03-08 → 2026-10-04 (+210d) |  |  |
| A77080 | Excavation | 2026-02-01 → 2026-08-20 A (+200d) | 2026-02-04 → 2026-09-28 A (+236d) | 0% → 100% | 132d → none |
| A77090 | Pipe Laying | 2026-02-14 → 2026-08-20 A (+187d) | 2026-03-01 → 2026-09-28 A (+211d) | 0% → 100% | 125d → none |
| A77100 | Install Manhole | 2026-02-05 → 2026-08-20 A (+196d) | 2026-02-09 → 2026-09-28 A (+231d) | 0% → 100% | 144d → none |
| A77120 | Backfilling & Compaction | 2026-03-04 → 2026-08-20 A (+169d) | 2026-03-08 → 2026-09-28 A (+204d) | 0% → 100% | 125d → none |
| A77110 | Testing & Inspection | 2026-03-02 → 2026-10-03 (+215d) | 2026-03-03 → 2026-10-04 (+215d) |  | 125d → 20d |
| MH-2-H /MH-3-H | **MH-2-H /MH-3-H** | 2026-02-05 → 2026-08-20 (+196d) | 2026-03-19 → 2026-10-04 (+199d) |  |  |
| A77130 | Excavation | 2026-02-05 → 2026-08-20 A (+196d) | 2026-02-09 → 2026-09-28 A (+231d) | 0% → 100% | 164d → none |
| A77140 | Pipe Laying | 2026-02-10 → 2026-08-20 A (+191d) | 2026-02-25 → 2026-09-28 A (+215d) | 0% → 100% | 164d → none |
| A77150 | Install Manhole | 2026-02-10 → 2026-08-20 A (+191d) | 2026-02-14 → 2026-09-28 A (+226d) | 0% → 100% | 176d → none |
| A77170 | Backfilling & Compaction | 2026-03-09 → 2026-08-20 A (+164d) | 2026-03-19 → 2026-09-28 A (+193d) | 0% → 100% | 157d → none |
| A77160 | Testing & Inspection | 2026-02-26 → 2026-10-03 (+219d) | 2026-02-28 → 2026-10-04 (+218d) |  | 164d → 22d |
| MH-3-H /MH-4-H | **MH-3-H /MH-4-H** | 2026-02-10 → 2026-08-20 (+191d) | 2026-03-31 → 2026-10-04 (+187d) |  |  |
| A77180 | Excavation | 2026-02-10 → 2026-08-20 A (+191d) | 2026-02-14 → 2026-09-28 A (+226d) | 0% → 100% | 170d → none |
| A77190 | Pipe Laying | 2026-02-15 → 2026-08-20 A (+186d) | 2026-03-02 → 2026-09-28 A (+210d) | 0% → 100% | 170d → none |
| A77200 | Install Manhole | 2026-02-15 → 2026-08-20 A (+186d) | 2026-02-18 → 2026-09-28 A (+222d) | 0% → 100% | 182d → none |
| A77220 | Backfilling & Compaction | 2026-03-21 → 2026-08-20 A (+152d) | 2026-03-31 → 2026-09-28 A (+181d) | 0% → 100% | 157d → none |
| A77210 | Testing & Inspection | 2026-03-03 → 2026-10-03 (+214d) | 2026-03-04 → 2026-10-04 (+214d) |  | 170d → 22d |
| LR 23 | **LR 23** | 2026-02-05 → 2026-08-20 (+196d) | 2026-03-19 → 2026-10-04 (+199d) |  |  |
| MH-1-K /MH-2-K | **MH-1-K /MH-2-K** | 2026-02-05 → 2026-08-20 (+196d) | 2026-03-08 → 2026-10-04 (+210d) |  |  |
| A76980 | Excavation | 2026-02-05 → 2026-08-20 A (+196d) | 2026-02-09 → 2026-09-28 A (+231d) | 0% → 100% | 142d → none |
| A76990 | Pipe Laying | 2026-02-14 → 2026-08-20 A (+187d) | 2026-03-01 → 2026-09-28 A (+211d) | 0% → 100% | 139d → none |
| A77000 | Install Manhole | 2026-02-10 → 2026-08-20 A (+191d) | 2026-02-14 → 2026-09-28 A (+226d) | 0% → 100% | 154d → none |
| A77020 | Backfilling & Compaction | 2026-03-04 → 2026-08-20 A (+169d) | 2026-03-08 → 2026-09-28 A (+204d) | 0% → 100% | 139d → none |
| A77010 | Testing & Inspection | 2026-03-02 → 2026-10-03 (+215d) | 2026-03-03 → 2026-10-04 (+215d) |  | 139d → 34d |
| MH-2-K / 0-K | **MH-2-K / 0-K** | 2026-02-10 → 2026-08-20 (+191d) | 2026-03-19 → 2026-10-04 (+199d) |  |  |
| A77030 | Excavation | 2026-02-10 → 2026-08-20 A (+191d) | 2026-02-14 → 2026-09-28 A (+226d) | 0% → 100% | 184d → none |
| A77040 | Pipe Laying | 2026-02-15 → 2026-08-20 A (+186d) | 2026-03-02 → 2026-09-28 A (+210d) | 0% → 100% | 184d → none |
| A77050 | Install Manhole | 2026-02-15 → 2026-08-20 A (+186d) | 2026-02-18 → 2026-09-28 A (+222d) | 0% → 100% | 196d → none |
| A77070 | Backfilling & Compaction | 2026-03-09 → 2026-08-20 A (+164d) | 2026-03-19 → 2026-09-28 A (+193d) | 0% → 100% | 181d → none |
| A77060 | Testing & Inspection | 2026-03-03 → 2026-10-03 (+214d) | 2026-03-04 → 2026-10-04 (+214d) |  | 184d → 36d |
| LR 24 | **LR 24** | 2026-02-10 → 2026-08-20 (+191d) | 2026-04-25 → 2026-10-04 (+162d) |  |  |
| MH-5-M /MH-6-M | **MH-5-M /MH-6-M** | 2026-02-15 → 2026-08-20 (+186d) | 2026-03-28 → 2026-10-04 (+190d) |  |  |
| A76780 | Excavation | 2026-02-15 → 2026-08-20 A (+186d) | 2026-02-18 → 2026-09-28 A (+222d) | 0% → 100% | 162d → none |
| A76790 | Pipe Laying | 2026-02-19 → 2026-08-20 A (+182d) | 2026-02-23 → 2026-09-28 A (+217d) | 0% → 100% | 166d → none |
| A76800 | Install Manhole | 2026-02-19 → 2026-08-20 A (+182d) | 2026-02-23 → 2026-09-28 A (+217d) | 0% → 100% | 168d → none |
| A76820 | Backfilling & Compaction | 2026-03-17 → 2026-08-20 A (+156d) | 2026-03-28 → 2026-09-28 A (+184d) | 0% → 100% | 150d → none |

| ID | Task | Start | Finish | Complete | Total float |
| --- | --- | --- | --- | --- | --- |
| A76810 | Testing & Inspection | 2026-02-24 → 2026-10-03 (+221d) | 2026-02-25 → 2026-10-04 (+221d) |  | 166d → 31d |
| MH-5-M-1 /MH-5-M | **MH-5-M-1 /MH-5-M** | 2026-02-10 → 2026-08-20 (+191d) | 2026-03-16 → 2026-10-04 (+202d) |  |  |
| A76730 | Excavation | 2026-02-10 → 2026-08-20 A (+191d) | 2026-02-14 → 2026-09-28 A (+226d) | 0% → 100% | 106d → none |
| A76740 | Pipe Laying | 2026-02-15 → 2026-08-20 A (+186d) | 2026-03-02 → 2026-09-28 A (+210d) | 0% → 100% | 106d → none |
| A76750 | Install Manhole | 2026-02-15 → 2026-08-20 A (+186d) | 2026-02-18 → 2026-09-28 A (+222d) | 0% → 100% | 118d → none |
| A76770 | Backfilling & Compaction | 2026-03-05 → 2026-08-20 A (+168d) | 2026-03-16 → 2026-09-28 A (+196d) | 0% → 100% | 106d → none |
| A76760 | Testing & Inspection | 2026-03-03 → 2026-10-03 (+214d) | 2026-03-04 → 2026-10-04 (+214d) |  | 106d → 29d |
| MH-6-M /MH-7-M | **MH-6-M /MH-7-M** | 2026-02-19 → 2026-08-20 (+182d) | 2026-04-08 → 2026-10-04 (+179d) |  |  |
| A76830 | Excavation | 2026-02-19 → 2026-08-20 A (+182d) | 2026-02-23 → 2026-09-28 A (+217d) | 0% → 100% | 162d → none |
| A76840 | Pipe Laying | 2026-02-24 → 2026-08-20 A (+177d) | 2026-03-11 → 2026-09-28 A (+201d) | 0% → 100% | 162d → none |
| A76850 | Install Manhole | 2026-02-24 → 2026-08-20 A (+177d) | 2026-02-28 → 2026-09-28 A (+212d) | 0% → 100% | 174d → none |
| A76870 | Backfilling & Compaction | 2026-03-29 → 2026-08-20 A (+144d) | 2026-04-08 → 2026-09-28 A (+173d) | 0% → 100% | 150d → none |
| A76860 | Testing & Inspection | 2026-03-12 → 2026-10-03 (+205d) | 2026-03-14 → 2026-10-04 (+204d) |  | 162d → 31d |
| MH-7-M /MH-8-M | **MH-7-M /MH-8-M** | 2026-02-24 → 2026-08-20 (+177d) | 2026-04-13 → 2026-10-04 (+174d) |  |  |
| A76880 | Excavation | 2026-02-24 → 2026-08-20 A (+177d) | 2026-02-28 → 2026-09-28 A (+212d) | 0% → 100% | 168d → none |
| A76890 | Pipe Laying | 2026-03-01 → 2026-08-20 A (+172d) | 2026-03-16 → 2026-09-28 A (+196d) | 0% → 100% | 168d → none |
| A76900 | Install Manhole | 2026-03-01 → 2026-08-20 A (+172d) | 2026-03-04 → 2026-09-28 A (+208d) | 0% → 100% | 180d → none |
| A76920 | Backfilling & Compaction | 2026-04-09 → 2026-08-20 A (+133d) | 2026-04-13 → 2026-09-28 A (+168d) | 0% → 100% | 150d → none |
| A76910 | Testing & Inspection | 2026-03-17 → 2026-10-03 (+200d) | 2026-03-18 → 2026-10-04 (+200d) |  | 168d → 31d |
| MH-8-M / 0-M | **MH-8-M / 0-M** | 2026-03-01 → 2026-08-20 (+172d) | 2026-04-25 → 2026-10-04 (+162d) |  |  |
| A76930 | Excavation | 2026-03-01 → 2026-08-20 A (+172d) | 2026-03-04 → 2026-09-28 A (+208d) | 0% → 100% | 168d → none |
| A76940 | Pipe Laying | 2026-03-05 → 2026-08-20 A (+168d) | 2026-03-21 → 2026-09-28 A (+191d) | 0% → 100% | 168d → none |
| A76950 | Install Manhole | 2026-03-05 → 2026-08-20 A (+168d) | 2026-03-09 → 2026-09-28 A (+203d) | 0% → 100% | 180d → none |
| A76970 | Backfilling & Compaction | 2026-04-14 → 2026-08-20 A (+128d) | 2026-04-25 → 2026-09-28 A (+156d) | 0% → 100% | 150d → none |
| A76960 | Testing & Inspection | 2026-03-22 → 2026-10-03 (+195d) | 2026-03-23 → 2026-10-04 (+195d) |  | 168d → 31d |
| LR 25 | **LR 25** | 2026-02-15 → 2026-08-20 (+186d) | 2026-04-22 → 2026-10-04 (+165d) |  |  |
| MH-1-M /MH-2-M | **MH-1-M /MH-2-M** | 2026-02-19 → 2026-08-20 (+182d) | 2026-03-25 → 2026-10-04 (+193d) |  |  |
| A76530 | Excavation | 2026-02-19 → 2026-08-20 A (+182d) | 2026-02-23 → 2026-09-28 A (+217d) | 0% → 100% | 30d → none |
| A76540 | Pipe Laying | 2026-02-24 → 2026-08-20 A (+177d) | 2026-03-11 → 2026-09-28 A (+201d) | 0% → 100% | 30d → none |
| A76550 | Install Manhole | 2026-02-24 → 2026-08-20 A (+177d) | 2026-02-28 → 2026-09-28 A (+212d) | 0% → 100% | 42d → none |
| A76570 | Backfilling & Compaction | 2026-03-15 → 2026-08-20 A (+158d) | 2026-03-25 → 2026-09-28 A (+187d) | 0% → 100% | 30d → none |
| A76560 | Testing & Inspection | 2026-03-12 → 2026-10-03 (+205d) | 2026-03-14 → 2026-10-04 (+204d) |  | 30d → 43.88d |
| MH-2-F /MH-2-F-2 | **MH-2-F /MH-2-F-2** | 2026-02-15 → 2026-08-20 (+186d) | 2026-03-09 → 2026-10-04 (+209d) |  |  |
| A76480 | Excavation | 2026-02-15 → 2026-08-20 A (+186d) | 2026-02-18 → 2026-09-28 A (+222d) | 0% → 100% | 0d → none |
| A76490 | Pipe Laying | 2026-02-19 → 2026-08-20 A (+182d) | 2026-02-23 → 2026-09-28 A (+217d) | 0% → 100% | 0d → none |
| A76500 | Install Manhole | 2026-02-19 → 2026-08-20 A (+182d) | 2026-02-23 → 2026-09-28 A (+217d) | 0% → 100% | 2d → none |
| A76520 | Backfilling & Compaction | 2026-02-26 → 2026-08-20 A (+175d) | 2026-03-09 → 2026-09-28 A (+203d) | 0% → 100% | 0d → none |
| A76510 | Testing & Inspection | 2026-02-24 → 2026-10-03 (+221d) | 2026-02-25 → 2026-10-04 (+221d) |  | 0d → 41.88d |
| MH-2-M /MH-3-M | **MH-2-M /MH-3-M** | 2026-02-24 → 2026-08-20 (+177d) | 2026-03-30 → 2026-10-04 (+188d) |  |  |
| A76580 | Excavation | 2026-02-24 → 2026-08-20 A (+177d) | 2026-02-28 → 2026-09-28 A (+212d) | 0% → 100% | 36d → none |
| A76590 | Pipe Laying | 2026-03-01 → 2026-08-20 A (+172d) | 2026-03-16 → 2026-09-28 A (+196d) | 0% → 100% | 36d → none |
| A76600 | Install Manhole | 2026-03-01 → 2026-08-20 A (+172d) | 2026-03-04 → 2026-09-28 A (+208d) | 0% → 100% | 48d → none |
| A76620 | Backfilling & Compaction | 2026-03-26 → 2026-08-20 A (+147d) | 2026-03-30 → 2026-09-28 A (+182d) | 0% → 100% | 30d → none |
| A76610 | Testing & Inspection | 2026-03-17 → 2026-10-03 (+200d) | 2026-03-18 → 2026-10-04 (+200d) |  | 36d → 43.88d |
| MH-3-M /MH-4-M | **MH-3-M /MH-4-M** | 2026-03-01 → 2026-08-20 (+172d) | 2026-04-11 → 2026-10-04 (+176d) |  |  |
| A76630 | Excavation | 2026-03-01 → 2026-08-20 A (+172d) | 2026-03-04 → 2026-09-28 A (+208d) | 0% → 100% | 36d → none |
| A76640 | Pipe Laying | 2026-03-05 → 2026-08-20 A (+168d) | 2026-03-21 → 2026-09-28 A (+191d) | 0% → 100% | 36d → none |
| A76650 | Install Manhole | 2026-03-05 → 2026-08-20 A (+168d) | 2026-03-09 → 2026-09-28 A (+203d) | 0% → 100% | 48d → none |
| A76670 | Backfilling & Compaction | 2026-03-31 → 2026-08-20 A (+142d) | 2026-04-11 → 2026-09-28 A (+170d) | 0% → 100% | 30d → none |
| A76660 | Testing & Inspection | 2026-03-22 → 2026-10-03 (+195d) | 2026-03-23 → 2026-10-04 (+195d) |  | 36d → 43.88d |
| MH-4-M /MH-5-M | **MH-4-M /MH-5-M** | 2026-03-05 → 2026-08-20 (+168d) | 2026-04-22 → 2026-10-04 (+165d) |  |  |
| A76680 | Excavation | 2026-03-05 → 2026-08-20 A (+168d) | 2026-03-09 → 2026-09-28 A (+203d) | 0% → 100% | 42d → none |
| A76690 | Pipe Laying | 2026-03-10 → 2026-08-20 A (+163d) | 2026-03-25 → 2026-09-28 A (+187d) | 0% → 100% | 42d → none |
| A76700 | Install Manhole | 2026-03-10 → 2026-08-20 A (+163d) | 2026-03-14 → 2026-09-28 A (+198d) | 0% → 100% | 54d → none |
| A76720 | Backfilling & Compaction | 2026-04-12 → 2026-08-20 A (+130d) | 2026-04-22 → 2026-09-28 A (+159d) | 0% → 100% | 30d → none |
| A76710 | Testing & Inspection | 2026-03-26 → 2026-10-03 (+191d) | 2026-03-28 → 2026-10-04 (+190d) |  | 42d → 43.88d |
| LR 26 | **LR 26** | 2026-02-19 → 2026-08-20 (+182d) | 2026-10-24 → 2026-12-23 (+60d) |  |  |
| MH-1-O /MH-2-O | **MH-1-O /MH-2-O** | 2026-03-01 → 2026-08-20 (+172d) | 2026-04-04 → 2026-10-05 (+184d) |  |  |
| A75930 | Excavation | 2026-03-01 → 2026-08-20 A (+172d) | 2026-03-04 → 2026-09-28 A (+208d) | 0% → 100% | 75d → none |
| A75940 | Pipe Laying | 2026-03-05 → 2026-08-20 A (+168d) | 2026-03-14 → 2026-09-28 A (+198d) | 0% → 100% | 75d → none |
| A75950 | Install Manhole | 2026-03-05 → 2026-08-20 A (+168d) | 2026-03-09 → 2026-09-28 A (+203d) | 0% → 100% | 81d → none |
| A75970 | Backfilling & Compaction | 2026-03-24 → 2026-08-20 A (+149d) | 2026-04-04 → 2026-09-28 A (+177d) | 0% → 100% | 69d → none |
| A75960 | Testing & Inspection | 2026-03-15 → 2026-10-03 (+202d) | 2026-03-16 → 2026-10-05 (+203d) |  | 75d → 39.15d |
| MH-10-O /MH-11-O | **MH-10-O /MH-11-O** | 2026-04-16 → 2026-10-07 (+174d) | 2026-07-29 → 2026-11-30 (+124d) |  |  |
| A75780 | Excavation | 2026-04-16 → 2026-10-07 (+174d) | 2026-04-20 → 2026-10-12 (+175d) |  | 135d → 53.15d |
| A75790 | Pipe Laying | 2026-04-21 → 2026-10-12 (+174d) | 2026-04-29 → 2026-10-21 (+175d) |  | 135d → 53.15d |
| A75800 | Install Manhole | 2026-04-21 → 2026-10-12 (+174d) | 2026-04-25 → 2026-10-17 (+175d) |  | 141d → 59.15d |
| A75810 | Testing & Inspection | 2026-04-30 → 2026-10-21 (+174d) | 2026-05-02 → 2026-10-24 (+175d) |  | 135d → 53.15d |
| A75820 | Backfilling & Compaction | 2026-07-19 → 2026-11-18 (+122d) | 2026-07-29 → 2026-11-30 (+124d) |  | 69d → 31.15d |
| MH-11-O /MH-12-O | **MH-11-O /MH-12-O** | 2026-04-21 → 2026-10-12 (+174d) | 2026-08-10 → 2026-12-12 (+124d) |  |  |

| ID | Task | Start | Finish | Complete | Total float |
| --- | --- | --- | --- | --- | --- |
| A75680 | Excavation | 2026-04-21 → 2026-10-12 (+174d) | 2026-04-25 → 2026-10-17 (+175d) |  | 141d → 59.15d |
| A75690 | Pipe Laying | 2026-04-26 → 2026-10-17 (+174d) | 2026-05-04 → 2026-10-26 (+175d) |  | 141d → 59.15d |
| A75700 | Install Manhole | 2026-04-26 → 2026-10-17 (+174d) | 2026-04-29 → 2026-10-21 (+175d) |  | 147d → 65.15d |
| A75710 | Testing & Inspection | 2026-05-05 → 2026-10-26 (+174d) | 2026-05-06 → 2026-10-28 (+175d) |  | 141d → 59.15d |
| A75720 | Backfilling & Compaction | 2026-07-30 → 2026-11-30 (+123d) | 2026-08-10 → 2026-12-12 (+124d) |  | 69d → 31.15d |
| MH-13-O-1 /MH-13-O-0 | **MH-13-O-1 /MH-13-O-0** | 2026-05-24 → 2026-08-20 (+88d) | 2026-10-24 → 2026-10-19 (-5d) |  |  |
| A75380 | Excavation | 2026-05-24 → 2026-08-20 A (+88d) | 2026-05-27 → 2026-09-28 A (+124d) | 0% → 100% | 177d → none |
| A75390 | Pipe Laying | 2026-05-28 → 2026-08-20 A (+84d) | 2026-06-06 → 2026-09-28 A (+114d) | 0% → 100% | 177d → none |
| A75400 | Install Manhole | 2026-05-28 → 2026-08-20 A (+84d) | 2026-06-01 → 2026-09-28 A (+119d) | 0% → 100% | 183d → none |
| A75420 | Backfilling & Compaction | 2026-10-13 → 2026-08-20 A (-54d) | 2026-10-24 → 2026-09-28 A (-26d) | 0% → 100% | 69d → none |
| A75410 | Testing & Inspection | 2026-06-07 → 2026-10-17 (+132d) | 2026-06-08 → 2026-10-19 (+133d) |  | 177d → 87.15d |
| MH-13-O-2 /MH-13-O-1 | **MH-13-O-2 /MH-13-O-1** | 2026-05-19 → 2026-08-20 (+93d) | 2026-10-12 → 2026-10-19 (+7d) |  |  |
| A75430 | Excavation | 2026-05-19 → 2026-08-20 A (+93d) | 2026-05-23 → 2026-09-28 A (+128d) | 0% → 100% | 171d → none |
| A75440 | Pipe Laying | 2026-05-24 → 2026-08-20 A (+88d) | 2026-06-01 → 2026-09-28 A (+119d) | 0% → 100% | 171d → none |
| A75450 | Install Manhole | 2026-05-24 → 2026-08-20 A (+88d) | 2026-05-27 → 2026-09-28 A (+124d) | 0% → 100% | 177d → none |
| A75470 | Backfilling & Compaction | 2026-10-01 → 2026-08-20 A (-42d) | 2026-10-12 → 2026-09-28 A (-14d) | 0% → 100% | 69d → none |
| A75460 | Testing & Inspection | 2026-06-02 → 2026-10-17 (+137d) | 2026-06-03 → 2026-10-19 (+138d) |  | 171d → 87.15d |
| MH-13-O-3 /MH-13-O-2 | **MH-13-O-3 /MH-13-O-2** | 2026-05-14 → 2026-08-20 (+98d) | 2026-09-30 → 2026-10-19 (+19d) |  |  |
| A75480 | Excavation | 2026-05-14 → 2026-08-20 A (+98d) | 2026-05-18 → 2026-09-28 A (+133d) | 0% → 100% | 165d → none |
| A75490 | Pipe Laying | 2026-05-19 → 2026-08-20 A (+93d) | 2026-05-27 → 2026-09-28 A (+124d) | 0% → 100% | 165d → none |
| A75500 | Install Manhole | 2026-05-19 → 2026-08-20 A (+93d) | 2026-05-23 → 2026-09-28 A (+128d) | 0% → 100% | 171d → none |
| A75520 | Backfilling & Compaction | 2026-09-20 → 2026-08-20 A (-31d) | 2026-09-30 → 2026-09-28 A (-2d) | 0% → 100% | 69d → none |
| A75510 | Testing & Inspection | 2026-05-28 → 2026-10-17 (+142d) | 2026-05-30 → 2026-10-19 (+142d) |  | 165d → 87.15d |
| MH-13-O-4 /MH-13-O-3 | **MH-13-O-4 /MH-13-O-3** | 2026-05-10 → 2026-08-20 (+102d) | 2026-09-19 → 2026-10-19 (+30d) |  |  |
| A75530 | Excavation | 2026-05-10 → 2026-08-20 A (+102d) | 2026-05-13 → 2026-09-28 A (+138d) | 0% → 100% | 159d → none |
| A75540 | Pipe Laying | 2026-05-14 → 2026-08-20 A (+98d) | 2026-05-23 → 2026-09-28 A (+128d) | 0% → 100% | 159d → none |
| A75550 | Install Manhole | 2026-05-14 → 2026-08-20 A (+98d) | 2026-05-18 → 2026-09-28 A (+133d) | 0% → 100% | 165d → none |
| A75570 | Backfilling & Compaction | 2026-09-08 → 2026-08-20 A (-19d) | 2026-09-19 → 2026-09-28 A (+9d) | 0% → 100% | 69d → none |
| A75560 | Testing & Inspection | 2026-05-24 → 2026-10-17 (+146d) | 2026-05-25 → 2026-10-19 (+147d) |  | 159d → 87.15d |
| MH-13-O-5 /MH-13-O-4 | **MH-13-O-5 /MH-13-O-4** | 2026-05-05 → 2026-08-20 (+107d) | 2026-09-07 → 2026-10-19 (+42d) |  |  |
| A75580 | Excavation | 2026-05-05 → 2026-08-20 A (+107d) | 2026-05-09 → 2026-09-28 A (+142d) | 0% → 100% | 159d → none |
| A75590 | Pipe Laying | 2026-05-10 → 2026-08-20 A (+102d) | 2026-05-18 → 2026-09-28 A (+133d) | 0% → 100% | 159d → none |
| A75600 | Install Manhole | 2026-05-10 → 2026-08-20 A (+102d) | 2026-05-13 → 2026-09-28 A (+138d) | 0% → 100% | 165d → none |
| A75620 | Backfilling & Compaction | 2026-09-03 → 2026-08-20 A (-14d) | 2026-09-07 → 2026-09-28 A (+21d) | 0% → 100% | 69d → none |
| A75610 | Testing & Inspection | 2026-05-19 → 2026-10-17 (+151d) | 2026-05-20 → 2026-10-19 (+152d) |  | 159d → 87.15d |
| MH-13-O-6 /MH-13-O-5 | **MH-13-O-6 /MH-13-O-5** | 2026-04-30 → 2026-08-20 (+112d) | 2026-09-02 → 2026-10-19 (+47d) |  |  |
| A75630 | Excavation | 2026-04-30 → 2026-08-20 A (+112d) | 2026-05-04 → 2026-09-28 A (+147d) | 0% → 100% | 153d → none |
| A75640 | Pipe Laying | 2026-05-05 → 2026-08-20 A (+107d) | 2026-05-13 → 2026-09-28 A (+138d) | 0% → 100% | 153d → none |
| A75650 | Install Manhole | 2026-05-05 → 2026-08-20 A (+107d) | 2026-05-09 → 2026-09-28 A (+142d) | 0% → 100% | 159d → none |
| A75670 | Backfilling & Compaction | 2026-08-23 → 2026-08-20 A (-3d) | 2026-09-02 → 2026-09-28 A (+26d) | 0% → 100% | 69d → none |
| A75660 | Testing & Inspection | 2026-05-14 → 2026-10-17 (+156d) | 2026-05-16 → 2026-10-19 (+156d) |  | 153d → 87.15d |
| MH-13-O-7 /MH-13-O-6 | **MH-13-O-7 /MH-13-O-6** | 2026-04-26 → 2026-08-20 (+116d) | 2026-08-22 → 2026-12-23 (+123d) |  |  |
| A75730 | Excavation | 2026-04-26 → 2026-08-20 A (+116d) | 2026-04-29 → 2026-09-28 A (+152d) | 0% → 100% | 147d → none |
| A75740 | Pipe Laying | 2026-04-30 → 2026-10-17 (+170d) | 2026-05-09 → 2026-10-26 (+170d) |  | 147d → 69.15d |
| A75750 | Install Manhole | 2026-04-30 → 2026-10-17 (+170d) | 2026-05-04 → 2026-10-21 (+170d) |  | 153d → 75.15d |
| A75760 | Testing & Inspection | 2026-05-10 → 2026-10-26 (+169d) | 2026-05-11 → 2026-10-28 (+170d) |  | 147d → 69.15d |
| A75770 | Backfilling & Compaction | 2026-08-11 → 2026-12-12 (+123d) | 2026-08-22 → 2026-12-23 (+123d) |  | 69d → 31.15d |
| MH-2-O /MH-3-O | **MH-2-O /MH-3-O** | 2026-03-05 → 2026-08-20 (+168d) | 2026-04-15 → 2026-10-05 (+173d) |  |  |
| A75980 | Excavation | 2026-03-05 → 2026-08-20 A (+168d) | 2026-03-09 → 2026-09-28 A (+203d) | 0% → 100% | 81d → none |
| A75990 | Pipe Laying | 2026-03-10 → 2026-08-20 A (+163d) | 2026-03-18 → 2026-09-28 A (+194d) | 0% → 100% | 81d → none |
| A76000 | Install Manhole | 2026-03-10 → 2026-08-20 A (+163d) | 2026-03-14 → 2026-09-28 A (+198d) | 0% → 100% | 87d → none |
| A76020 | Backfilling & Compaction | 2026-04-05 → 2026-08-20 A (+137d) | 2026-04-15 → 2026-09-28 A (+166d) | 0% → 100% | 69d → none |
| A76010 | Testing & Inspection | 2026-03-19 → 2026-10-03 (+198d) | 2026-03-21 → 2026-10-05 (+198d) |  | 81d → 39.15d |
| MH-3-O /MH-4-O | **MH-3-O /MH-4-O** | 2026-03-10 → 2026-08-20 (+163d) | 2026-04-27 → 2026-10-05 (+161d) |  |  |
| A76030 | Excavation | 2026-03-10 → 2026-08-20 A (+163d) | 2026-03-14 → 2026-09-28 A (+198d) | 0% → 100% | 91d → none |
| A76040 | Pipe Laying | 2026-03-15 → 2026-08-20 A (+158d) | 2026-03-18 → 2026-09-28 A (+194d) | 0% → 100% | 91d → none |
| A76050 | Install Manhole | 2026-03-15 → 2026-08-20 A (+158d) | 2026-03-18 → 2026-09-28 A (+194d) | 0% → 100% | 93d → none |
| A76070 | Backfilling & Compaction | 2026-04-16 → 2026-08-20 A (+126d) | 2026-04-27 → 2026-09-28 A (+154d) | 0% → 100% | 69d → none |
| A76060 | Testing & Inspection | 2026-03-19 → 2026-10-03 (+198d) | 2026-03-21 → 2026-10-05 (+198d) |  | 91d → 39.15d |
| MH-4-O /MH-5-O | **MH-4-O /MH-5-O** | 2026-03-15 → 2026-08-20 (+158d) | 2026-05-09 → 2026-10-05 (+149d) |  |  |
| A76080 | Excavation | 2026-03-15 → 2026-08-20 A (+158d) | 2026-03-18 → 2026-09-28 A (+194d) | 0% → 100% | 93d → none |
| A76090 | Pipe Laying | 2026-03-19 → 2026-08-20 A (+154d) | 2026-03-28 → 2026-09-28 A (+184d) | 0% → 100% | 93d → none |
| A76100 | Install Manhole | 2026-03-19 → 2026-08-20 A (+154d) | 2026-03-23 → 2026-09-28 A (+189d) | 0% → 100% | 99d → none |
| A76120 | Backfilling & Compaction | 2026-04-28 → 2026-08-20 A (+114d) | 2026-05-09 → 2026-09-28 A (+142d) | 0% → 100% | 69d → none |
| A76110 | Testing & Inspection | 2026-03-29 → 2026-10-03 (+188d) | 2026-03-30 → 2026-10-05 (+189d) |  | 93d → 39.15d |
| MH-5-M-2 /MH-5-M-1 | **MH-5-M-2 /MH-5-M-1** | 2026-02-24 → 2026-08-20 (+177d) | 2026-03-23 → 2026-10-05 (+196d) |  |  |
| A75880 | Excavation | 2026-02-24 → 2026-08-20 A (+177d) | 2026-02-28 → 2026-09-28 A (+212d) | 0% → 100% | 75d → none |
| A75890 | Pipe Laying | 2026-03-01 → 2026-08-20 A (+172d) | 2026-03-09 → 2026-09-28 A (+203d) | 0% → 100% | 75d → none |
| A75900 | Install Manhole | 2026-03-01 → 2026-08-20 A (+172d) | 2026-03-04 → 2026-09-28 A (+208d) | 0% → 100% | 81d → none |
| A75920 | Backfilling & Compaction | 2026-03-19 → 2026-08-20 A (+154d) | 2026-03-23 → 2026-09-28 A (+189d) | 0% → 100% | 69d → none |

| ID | Task | Start | Finish | Complete | Total float |
| --- | --- | --- | --- | --- | --- |
| A75910 | Testing & Inspection | 2026-03-10 → 2026-10-03 (+207d) | 2026-03-11 → 2026-10-05 (+208d) |  | 75d → 39.15d |
| MH-5-M-3 /MH-5-M-2 | **MH-5-M-3 /MH-5-M-2** | 2026-02-19 → 2026-08-20 (+182d) | 2026-03-18 → 2026-10-05 (+201d) |  |  |
| A75830 | Excavation | 2026-02-19 → 2026-08-20 A (+182d) | 2026-02-23 → 2026-09-28 A (+217d) | 0% → 100% | 69d → none |
| A75840 | Pipe Laying | 2026-02-24 → 2026-08-20 A (+177d) | 2026-03-04 → 2026-09-28 A (+208d) | 0% → 100% | 69d → none |
| A75850 | Install Manhole | 2026-02-24 → 2026-08-20 A (+177d) | 2026-02-28 → 2026-09-28 A (+212d) | 0% → 100% | 75d → none |
| A75870 | Backfilling & Compaction | 2026-03-08 → 2026-08-20 A (+165d) | 2026-03-18 → 2026-09-28 A (+194d) | 0% → 100% | 69d → none |
| A75860 | Testing & Inspection | 2026-03-05 → 2026-10-03 (+212d) | 2026-03-07 → 2026-10-05 (+212d) |  | 69d → 6.15d |
| MH-5-O /MH-6-O | **MH-5-O /MH-6-O** | 2026-03-19 → 2026-08-20 (+154d) | 2026-05-20 → 2026-10-26 (+159d) |  |  |
| A76130 | Excavation | 2026-03-19 → 2026-08-20 A (+154d) | 2026-03-23 → 2026-09-28 A (+189d) | 0% → 100% | 99d → none |
| A76140 | Pipe Laying | 2026-03-24 → 2026-10-03 (+193d) | 2026-04-01 → 2026-10-12 (+194d) |  | 99d → 31.15d |
| A76150 | Install Manhole | 2026-03-24 → 2026-10-03 (+193d) | 2026-03-28 → 2026-10-07 (+193d) |  | 105d → 37.15d |
| A76160 | Testing & Inspection | 2026-04-02 → 2026-10-12 (+193d) | 2026-04-04 → 2026-10-14 (+193d) |  | 99d → 31.15d |
| A76170 | Backfilling & Compaction | 2026-05-10 → 2026-10-14 (+157d) | 2026-05-20 → 2026-10-26 (+159d) |  | 69d → 31.15d |
| MH-6-O /MH-10-O | **MH-6-O /MH-10-O** | 2026-04-12 → 2026-10-03 (+174d) | 2026-07-18 → 2026-11-18 (+123d) |  |  |
| A76380 | Excavation | 2026-04-12 → 2026-10-03 (+174d) | 2026-04-15 → 2026-10-07 (+175d) |  | 129d → 47.15d |
| A76390 | Pipe Laying | 2026-04-16 → 2026-10-07 (+174d) | 2026-04-25 → 2026-10-17 (+175d) |  | 129d → 47.15d |
| A76400 | Install Manhole | 2026-04-16 → 2026-10-07 (+174d) | 2026-04-20 → 2026-10-12 (+175d) |  | 135d → 53.15d |
| A76410 | Testing & Inspection | 2026-04-26 → 2026-10-17 (+174d) | 2026-04-27 → 2026-10-19 (+175d) |  | 129d → 47.15d |
| A76420 | Backfilling & Compaction | 2026-07-07 → 2026-11-07 (+123d) | 2026-07-18 → 2026-11-18 (+123d) |  | 69d → 31.15d |
| MH-6-O /MH-7-O | **MH-6-O /MH-7-O** | 2026-03-24 → 2026-08-20 (+149d) | 2026-06-01 → 2026-10-05 (+126d) |  |  |
| A76180 | Excavation | 2026-03-24 → 2026-08-20 A (+149d) | 2026-03-28 → 2026-09-28 A (+184d) | 0% → 100% | 105d → none |
| A76190 | Pipe Laying | 2026-03-29 → 2026-08-20 A (+144d) | 2026-04-06 → 2026-09-28 A (+175d) | 0% → 100% | 105d → none |
| A76200 | Install Manhole | 2026-03-29 → 2026-08-20 A (+144d) | 2026-04-01 → 2026-09-28 A (+180d) | 0% → 100% | 111d → none |
| A76220 | Backfilling & Compaction | 2026-05-21 → 2026-08-20 A (+91d) | 2026-06-01 → 2026-09-28 A (+119d) | 0% → 100% | 69d → none |
| A76210 | Testing & Inspection | 2026-04-07 → 2026-10-03 (+179d) | 2026-04-08 → 2026-10-05 (+180d) |  | 105d → 49.15d |
| MH-7-O /MH-8-O | **MH-7-O /MH-8-O** | 2026-03-29 → 2026-08-20 (+144d) | 2026-06-13 → 2026-10-05 (+114d) |  |  |
| A76230 | Excavation | 2026-03-29 → 2026-08-20 A (+144d) | 2026-04-01 → 2026-09-28 A (+180d) | 0% → 100% | 111d → none |
| A76240 | Pipe Laying | 2026-04-02 → 2026-08-20 A (+140d) | 2026-04-11 → 2026-09-28 A (+170d) | 0% → 100% | 111d → none |
| A76250 | Install Manhole | 2026-04-02 → 2026-08-20 A (+140d) | 2026-04-06 → 2026-09-28 A (+175d) | 0% → 100% | 117d → none |
| A76270 | Backfilling & Compaction | 2026-06-02 → 2026-08-20 A (+79d) | 2026-06-13 → 2026-09-28 A (+107d) | 0% → 100% | 69d → none |
| A76260 | Testing & Inspection | 2026-04-12 → 2026-10-03 (+174d) | 2026-04-13 → 2026-10-05 (+175d) |  | 111d → 49.15d |
| MH-8-O /MH-9-O | **MH-8-O /MH-9-O** | 2026-04-02 → 2026-08-20 (+140d) | 2026-06-24 → 2026-11-07 (+136d) |  |  |
| A76280 | Excavation | 2026-04-02 → 2026-08-20 A (+140d) | 2026-04-06 → 2026-09-28 A (+175d) | 0% → 100% | 117d → none |
| A76290 | Pipe Laying | 2026-04-07 → 2026-10-03 (+179d) | 2026-04-15 → 2026-10-12 (+180d) |  | 117d → 41.15d |
| A76300 | Install Manhole | 2026-04-07 → 2026-10-03 (+179d) | 2026-04-11 → 2026-10-07 (+179d) |  | 123d → 47.15d |
| A76310 | Testing & Inspection | 2026-04-16 → 2026-10-12 (+179d) | 2026-04-18 → 2026-10-14 (+179d) |  | 117d → 41.15d |
| A76320 | Backfilling & Compaction | 2026-06-14 → 2026-10-26 (+134d) | 2026-06-24 → 2026-11-07 (+136d) |  | 69d → 31.15d |
| MH-9-O /MH-6-O | **MH-9-O /MH-6-O** | 2026-04-07 → 2026-08-20 (+135d) | 2026-07-06 → 2026-10-05 (+91d) |  |  |
| A76430 | Excavation | 2026-04-07 → 2026-08-20 A (+135d) | 2026-04-11 → 2026-09-28 A (+170d) | 0% → 100% | 123d → none |
| A76440 | Pipe Laying | 2026-04-12 → 2026-08-20 A (+130d) | 2026-04-20 → 2026-09-28 A (+161d) | 0% → 100% | 123d → none |
| A76450 | Install Manhole | 2026-04-12 → 2026-08-20 A (+130d) | 2026-04-15 → 2026-09-28 A (+166d) | 0% → 100% | 129d → none |
| A76470 | Backfilling & Compaction | 2026-06-25 → 2026-08-20 A (+56d) | 2026-07-06 → 2026-09-28 A (+84d) | 0% → 100% | 69d → none |
| A76460 | Testing & Inspection | 2026-04-21 → 2026-10-03 (+165d) | 2026-04-22 → 2026-10-05 (+166d) |  | 123d → 59.15d |
| LR 27 | **LR 27** | 2026-02-23 → 2026-08-20 (+178d) | 2026-04-02 → 2026-10-05 (+186d) |  |  |
| MH-7-M-1 /MH-7-M | **MH-7-M-1 /MH-7-M** | 2026-02-23 → 2026-08-20 (+178d) | 2026-03-15 → 2026-10-05 (+204d) |  |  |
| A75330 | Excavation | 2026-02-23 → 2026-08-20 A (+178d) | 2026-02-26 → 2026-09-28 A (+214d) | 0% → 100% | 5d → none |
| A75340 | Pipe Laying | 2026-02-28 → 2026-08-20 A (+173d) | 2026-03-08 → 2026-09-28 A (+204d) | 0% → 100% | 66d → none |
| A75350 | Install Manhole | 2026-02-28 → 2026-08-20 A (+173d) | 2026-03-03 → 2026-09-28 A (+209d) | 0% → 100% | 72d → none |
| A75370 | Backfilling & Compaction | 2026-03-11 → 2026-08-20 A (+162d) | 2026-03-15 → 2026-09-28 A (+197d) | 0% → 100% | 66d → none |
| A75360 | Testing & Inspection | 2026-03-09 → 2026-10-03 (+208d) | 2026-03-10 → 2026-10-05 (+209d) |  | 66d → 6.8d |
| MH-8-O-2 /MH-8-O-0 | **MH-8-O-2 /MH-8-O-0** | 2026-03-14 → 2026-08-20 (+159d) | 2026-04-02 → 2026-09-28 (+179d) |  |  |
| A75130 | Excavation | 2026-03-14 → 2026-08-20 A (+159d) | 2026-03-17 → 2026-09-28 A (+195d) | 0% → 100% | 5d → none |
| A75140 | Pipe Laying | 2026-03-18 → 2026-08-20 A (+155d) | 2026-03-26 → 2026-09-28 A (+186d) | 0% → 100% | 147d → none |
| A75150 | Install Manhole | 2026-03-18 → 2026-08-20 A (+155d) | 2026-03-22 → 2026-09-28 A (+190d) | 0% → 100% | 153d → none |
| A75160 | Testing & Inspection | 2026-03-28 → 2026-08-20 A (+145d) | 2026-03-29 → 2026-09-28 A (+183d) | 0% → 100% | 147d → none |
| A75170 | Backfilling & Compaction | 2026-03-30 → 2026-08-20 A (+143d) | 2026-04-02 → 2026-09-28 A (+179d) | 0% → 100% | 147d → none |
| MH-8-O-3 /MH-8-O-1 | **MH-8-O-3 /MH-8-O-1** | 2026-03-09 → 2026-08-20 (+164d) | 2026-03-29 → 2026-09-28 (+183d) |  |  |
| A75180 | Excavation | 2026-03-09 → 2026-08-20 A (+164d) | 2026-03-12 → 2026-09-28 A (+200d) | 0% → 100% | 5d → none |
| A75190 | Pipe Laying | 2026-03-14 → 2026-08-20 A (+159d) | 2026-03-17 → 2026-09-28 A (+195d) | 0% → 100% | 151d → none |
| A75200 | Install Manhole | 2026-03-14 → 2026-08-20 A (+159d) | 2026-03-17 → 2026-09-28 A (+195d) | 0% → 100% | 153d → none |
| A75210 | Testing & Inspection | 2026-03-18 → 2026-08-20 A (+155d) | 2026-03-19 → 2026-09-28 A (+193d) | 0% → 100% | 151d → none |
| A75220 | Backfilling & Compaction | 2026-03-25 → 2026-08-20 A (+148d) | 2026-03-29 → 2026-09-28 A (+183d) | 0% → 100% | 147d → none |
| MH-8-O-4 /MH-8-O-2 | **MH-8-O-4 /MH-8-O-2** | 2026-03-04 → 2026-08-20 (+169d) | 2026-03-24 → 2026-10-05 (+195d) |  |  |
| A75230 | Excavation | 2026-03-04 → 2026-08-20 A (+169d) | 2026-03-08 → 2026-09-28 A (+204d) | 0% → 100% | 5d → none |
| A75240 | Pipe Laying | 2026-03-09 → 2026-08-20 A (+164d) | 2026-03-12 → 2026-09-28 A (+200d) | 0% → 100% | 151d → none |
| A75250 | Install Manhole | 2026-03-09 → 2026-08-20 A (+164d) | 2026-03-12 → 2026-09-28 A (+200d) | 0% → 100% | 153d → none |
| A75270 | Backfilling & Compaction | 2026-03-21 → 2026-08-20 A (+152d) | 2026-03-24 → 2026-09-28 A (+188d) | 0% → 100% | 147d → none |
| A75260 | Testing & Inspection | 2026-03-14 → 2026-10-03 (+203d) | 2026-03-15 → 2026-10-05 (+204d) |  | 151d → 17.56d |
| MH-8-O-4 /MH-8-O-3 | **MH-8-O-4 /MH-8-O-3** | 2026-02-28 → 2026-08-20 (+173d) | 2026-03-19 → 2026-10-05 (+200d) |  |  |
| A75280 | Excavation | 2026-02-28 → 2026-08-20 A (+173d) | 2026-03-03 → 2026-09-28 A (+209d) | 0% → 100% | 5d → none |

| ID | Task | Start | Finish | Complete | Total float | Predecessors |
| --- | --- | --- | --- | --- | --- | --- |
| A75290 | Pipe Laying | 2026-03-04 → 2026-08-20 A (+169d) | 2026-03-12 → 2026-09-28 A (+200d) | 0% → 100% | 147d → none |  |
| A75300 | Install Manhole | 2026-03-04 → 2026-08-20 A (+169d) | 2026-03-08 → 2026-09-28 A (+204d) | 0% → 100% | 153d → none |  |
| A75320 | Backfilling & Compaction | 2026-03-16 → 2026-08-20 A (+157d) | 2026-03-19 → 2026-09-28 A (+193d) | 0% → 100% | 147d → none |  |
| A75310 | Testing & Inspection | 2026-03-14 → 2026-10-03 (+203d) | 2026-03-15 → 2026-10-05 (+204d) |  | 147d → 17.56d |  |
| MVN | **MV NETWORK** | 2026-07-01 → 2026-09-05 (+66d) | 2026-09-15 → 2027-01-23 (+130d) |  |  |  |
| 1 | **PSS 8714 - loop 01 Zone B** | 2026-07-01 → 2026-09-05 (+66d) | 2026-09-15 → 2027-01-17 (+124d) |  |  |  |
| A86130 | Trenching & excavation | 2026-07-01 → 2026-09-05 A (+66d) | 2026-07-09 → 2026-12-14 (+158d) | 0% → 60% | 0d → -102.8d |  |
| A86140 | Bedding preparation (sand) | 2026-07-06 → 2026-09-05 A (+61d) | 2026-07-21 → 2026-12-16 (+148d) | 0% → 60% | 14d → -97.8d |  |
| A86150 | Duct installation / concrete encasement | 2026-07-11 → 2026-09-05 A (+56d) | 2026-07-30 → 2026-12-21 (+144d) | 0% → 60% | 14d → -97.8d |  |
| A86160 | Backfilling & compaction | 2026-08-05 → 2026-09-05 A (+31d) | 2026-08-29 → 2026-12-30 (+123d) | 0% → 60% | 0d → -97.8d |  |
| A86170 | Cable Laying | 2026-08-01 → 2026-09-05 A (+35d) | 2026-08-24 → 2026-12-26 (+124d) | 0% → 60% | 0d → -97.8d | A86150 SS+4d, A86150 FF+4d, A10720 → A86150 SS+4d, A86150 FF+4d |
| A86190 | RMU / transformer installation | 2026-08-30 → 2026-12-30 (+122d) | 2026-09-09 → 2027-01-11 (+124d) |  | 0d → -97.8d | A86160, A10710 → A86160 |
| A86180 | Testing | 2026-09-10 → 2027-01-11 (+123d) | 2026-09-15 → 2027-01-17 (+124d) |  | 0d → -97.8d |  |
| 4 | **PSS 8714 - loop 02 Zone B** | 2026-07-11 → 2026-09-05 (+56d) | 2026-09-15 → 2027-01-20 (+127d) |  |  |  |
| A86200 | Trenching & excavation | 2026-07-11 → 2026-09-05 A (+56d) | 2026-07-18 → 2026-12-17 (+152d) | 0% → 60% | 0d → -102.8d |  |
| A86210 | Bedding preparation (sand) | 2026-07-15 → 2026-09-05 A (+52d) | 2026-07-30 → 2026-12-20 (+143d) | 0% → 60% | 6d → -101d |  |
| A86220 | Duct installation / concrete encasement | 2026-07-20 → 2026-09-05 A (+47d) | 2026-08-09 → 2026-12-24 (+137d) | 0% → 60% | 6d → -101d |  |
| A86230 | Backfilling & compaction | 2026-08-05 → 2026-09-05 A (+31d) | 2026-08-29 → 2027-01-03 (+127d) | 0% → 60% | 0d → -101d |  |
| A86240 | Cable Laying | 2026-08-01 → 2026-09-05 A (+35d) | 2026-08-24 → 2026-12-29 (+127d) | 0% → 60% | 0d → -101d | A86220 SS+4d, A86220 FF+4d, A10720 → A86220 SS+4d, A86220 FF+4d |
| A86260 | RMU / transformer installation | 2026-08-30 → 2027-01-04 (+127d) | 2026-09-09 → 2027-01-14 (+127d) |  | 0d → -101d | A86230, A10710 → A86230 |
| A86250 | Testing | 2026-09-10 → 2027-01-16 (+128d) | 2026-09-15 → 2027-01-20 (+127d) |  | 0d → -101d |  |
| 5 | **PSS 8714 - loop 03 Zone B** | 2026-07-19 → 2026-09-05 (+48d) | 2026-09-15 → 2027-01-23 (+130d) |  |  |  |
| A86270 | Trenching & excavation | 2026-07-19 → 2026-09-05 A (+48d) | 2026-07-22 → 2026-12-19 (+150d) | 0% → 60% | 0d → -102.8d |  |
| A86280 | Bedding preparation (sand) | 2026-07-23 → 2026-09-05 A (+44d) | 2026-08-08 → 2026-12-23 (+137d) | 0% → 60% | 0d → -102.8d |  |
| A86290 | Duct installation / concrete encasement | 2026-07-28 → 2026-09-05 A (+39d) | 2026-08-17 → 2026-12-28 (+133d) | 0% → 60% | 0d → -102.8d |  |
| A86300 | Backfilling & compaction | 2026-08-06 → 2026-09-05 A (+30d) | 2026-08-30 → 2027-01-06 (+129d) | 0% → 60% | 0d → -102.8d |  |
| A86310 | Cable Laying | 2026-08-02 → 2026-09-05 A (+34d) | 2026-08-25 → 2027-01-02 (+130d) | 0% → 60% | 0d → -102.8d | A86290 SS+4d, A86290 FF+4d, A10720 → A86290 SS+4d, A86290 FF+4d |
| A86330 | RMU / transformer installation | 2026-08-31 → 2027-01-06 (+128d) | 2026-09-10 → 2027-01-18 (+130d) |  | 0d → -102.8d | A86300, A10710 → A86300 |
| A86320 | Testing | 2026-09-12 → 2027-01-18 (+128d) | 2026-09-15 → 2027-01-23 (+130d) |  | 0d → -102.8d |  |
| 6 | **PSS 8714 - loop 04 Zone B** | 2026-07-23 → 2026-09-05 (+44d) | 2026-09-15 → 2027-01-19 (+126d) |  |  |  |
| A86340 | Trenching & excavation | 2026-07-23 → 2026-09-05 A (+44d) | 2026-07-27 → 2026-12-21 (+147d) | 0% → 60% | 0d → -99.2d |  |
| A86350 | Bedding preparation (sand) | 2026-07-28 → 2026-09-15 A (+49d) | 2026-08-05 → 2026-12-22 (+139d) | 0% → 60% | 0d → -99.2d |  |
| A86360 | Duct installation / concrete encasement | 2026-08-02 → 2026-09-15 A (+44d) | 2026-08-10 → 2026-12-27 (+139d) | 0% → 60% | 0d → -99.2d |  |
| A86370 | Backfilling & compaction | 2026-08-19 → 2026-09-15 A (+27d) | 2026-09-03 → 2027-01-07 (+126d) | 0% → 60% | 0d → -99.2d |  |
| A86380 | Cable Laying | 2026-08-06 → 2026-09-15 A (+40d) | 2026-08-30 → 2027-01-03 (+126d) | 0% → 60% | 0d → -99.2d | A86360 SS+4d, A86360 FF+4d, A10720 → A86360 SS+4d, A86360 FF+4d |
| A86400 | RMU / transformer installation | 2026-09-05 → 2027-01-07 (+124d) | 2026-09-09 → 2027-01-13 (+126d) |  | 0d → -99.2d | A86370, A10710 → A86370 |
| A86390 | Testing | 2026-09-10 → 2027-01-13 (+125d) | 2026-09-15 → 2027-01-19 (+126d) |  | 0d → -99.2d |  |
| ZB | **POTABLE NETWORK** | 2026-09-24 → 2026-08-20 (-35d) | 2027-01-13 → 2027-04-03 (+80d) |  |  |  |
| R1 | **Road 18** | 2026-09-24 → 2026-08-20 (-35d) | 2026-12-09 → 2027-02-21 (+74d) |  |  |  |
| A87810 | Road Crossing Works | 2026-09-24 → 2026-08-20 A (-35d) | 2026-10-12 → 2026-09-28 A (-14d) | 0% → 100% | 30d → none |  |
| A87800 | Trenching & Bedding | 2026-09-27 → 2026-09-15 A (-12d) | 2026-10-12 → 2027-01-02 (+82d) | 0% → 98% | 30d → -14.38d |  |
| A87820 | Pipe Laying | 2026-10-06 → 2026-09-15 A (-21d) | 2026-10-26 → 2027-01-07 (+73d) | 0% → 98% | 30d → -19.02d |  |
| A87840 | Backfilling & Compaction | 2026-11-01 → 2026-09-15 A (-47d) | 2026-11-18 → 2027-01-12 (+55d) | 0% → 98% | 30d → -3.34d |  |
| A87830 | Testing | 2026-10-27 → 2027-01-07 (+72d) | 2026-10-31 → 2027-01-12 (+73d) |  | 30d → -19.02d |  |
| A87850 | Chambers Construction works | 2026-11-01 → 2027-01-12 (+72d) | 2026-11-18 → 2027-01-31 (+74d) |  | 30d → -19.02d |  |
| A87860 | Valves & Fittings Installation | 2026-11-19 → 2027-01-31 (+73d) | 2026-12-09 → 2027-02-21 (+74d) |  | 30d → -19.02d |  |
| R11 | **Road 19** | 2026-09-24 → 2026-08-20 (-35d) | 2026-12-09 → 2027-02-21 (+74d) |  |  |  |
| A87880 | Road Crossing Works | 2026-09-24 → 2026-08-20 A (-35d) | 2026-10-12 → 2026-09-28 A (-14d) | 0% → 100% | 30d → none |  |
| A87870 | Trenching & Bedding | 2026-09-27 → 2026-09-15 A (-12d) | 2026-10-12 → 2027-01-02 (+82d) | 0% → 97% | 30d → -14.56d |  |
| A87890 | Pipe Laying | 2026-10-06 → 2026-09-15 A (-21d) | 2026-10-26 → 2027-01-07 (+73d) | 0% → 97% | 30d → -19.02d |  |
| A87910 | Backfilling & Compaction | 2026-11-01 → 2026-09-15 A (-47d) | 2026-11-18 → 2027-01-12 (+55d) | 0% → 97% | 30d → -3.5d |  |
| A87900 | Testing | 2026-10-27 → 2027-01-07 (+72d) | 2026-10-31 → 2027-01-12 (+73d) |  | 30d → -19.02d |  |
| A87920 | Chambers Construction works | 2026-11-01 → 2027-01-12 (+72d) | 2026-11-18 → 2027-01-31 (+74d) |  | 30d → -19.02d |  |
| A87930 | Valves & Fittings Installation | 2026-11-19 → 2027-01-31 (+73d) | 2026-12-09 → 2027-02-21 (+74d) |  | 30d → -19.02d |  |
| R12 | **Road 20** | 2026-09-24 → 2026-08-20 (-35d) | 2026-12-09 → 2027-02-21 (+74d) |  |  |  |
| A87950 | Road Crossing Works | 2026-09-24 → 2026-08-20 A (-35d) | 2026-10-12 → 2026-09-28 A (-14d) | 0% → 100% | 30d → none |  |
| A87940 | Trenching & Bedding | 2026-09-27 → 2026-09-15 A (-12d) | 2026-10-12 → 2027-01-02 (+82d) | 0% → 97% | 30d → -14.56d |  |
| A87960 | Pipe Laying | 2026-10-06 → 2026-09-15 A (-21d) | 2026-10-26 → 2027-01-07 (+73d) | 0% → 97% | 30d → -19.02d |  |
| A87980 | Backfilling & Compaction | 2026-11-01 → 2026-09-15 A (-47d) | 2026-11-18 → 2027-01-12 (+55d) | 0% → 97% | 30d → -3.5d |  |
| A87970 | Testing | 2026-10-27 → 2027-01-07 (+72d) | 2026-10-31 → 2027-01-12 (+73d) |  | 30d → -19.02d |  |
| A87990 | Chambers Construction works | 2026-11-01 → 2027-01-12 (+72d) | 2026-11-18 → 2027-01-31 (+74d) |  | 30d → -19.02d |  |
| A88000 | Valves & Fittings Installation | 2026-11-19 → 2027-01-31 (+73d) | 2026-12-09 → 2027-02-21 (+74d) |  | 30d → -19.02d |  |
| R13 | **Road 21** | 2026-09-24 → 2026-08-20 (-35d) | 2026-12-09 → 2027-02-21 (+74d) |  |  |  |
| A88020 | Road Crossing Works | 2026-09-24 → 2026-08-20 A (-35d) | 2026-10-12 → 2026-09-28 A (-14d) | 0% → 100% | 30d → none |  |
| A88010 | Trenching & Bedding | 2026-09-27 → 2026-09-15 A (-12d) | 2026-10-12 → 2027-01-02 (+82d) | 0% → 96% | 30d → -31.58d |  |
| A88030 | Pipe Laying | 2026-10-06 → 2026-09-15 A (-21d) | 2026-10-26 → 2027-01-07 (+73d) | 0% → 96% | 30d → -19.02d |  |
| A88050 | Backfilling & Compaction | 2026-11-01 → 2026-09-15 A (-47d) | 2026-11-18 → 2027-01-12 (+55d) | 0% → 96% | 30d → -3.66d |  |
| A88040 | Testing | 2026-10-27 → 2027-01-07 (+72d) | 2026-10-31 → 2027-01-12 (+73d) |  | 30d → -19.02d |  |
| A88060 | Chambers Construction works | 2026-11-01 → 2027-01-12 (+72d) | 2026-11-18 → 2027-01-31 (+74d) |  | 30d → -19.02d |  |
| A88070 | Valves & Fittings Installation | 2026-11-19 → 2027-01-31 (+73d) | 2026-12-09 → 2027-02-21 (+74d) |  | 30d → -19.02d |  |

| ID | Task | Start | Finish | Complete | Total float | Predecessors |
| --- | --- | --- | --- | --- | --- | --- |
| R14 | **Road 22** | 2026-09-24 → 2026-08-20 (-35d) | 2026-12-09 → 2027-03-17 (+98d) |  |  |  |
| A88090 | Road Crossing Works | 2026-09-24 → 2026-08-20 A (-35d) | 2026-10-12 → 2026-09-28 A (-14d) | 0% → 100% | 16d → none |  |
| A88080 | Trenching & Bedding | 2026-09-27 → 2027-01-02 (+97d) | 2026-10-12 → 2027-01-18 (+98d) |  | 16d → -54.02d |  |
| A88100 | Pipe Laying | 2026-10-06 → 2027-01-11 (+97d) | 2026-10-26 → 2027-02-01 (+98d) |  | 30d → -40.02d |  |
| A88110 | Testing | 2026-10-27 → 2027-02-01 (+97d) | 2026-10-31 → 2027-02-06 (+98d) |  | 30d → -40.02d |  |
| A88120 | Backfilling & Compaction | 2026-11-01 → 2027-02-06 (+97d) | 2026-11-18 → 2027-02-24 (+98d) |  | 30d → -40.02d |  |
| A88130 | Chambers Construction works | 2026-11-01 → 2027-02-06 (+97d) | 2026-11-18 → 2027-02-24 (+98d) |  | 30d → -40.02d |  |
| A88140 | Valves & Fittings Installation | 2026-11-19 → 2027-02-24 (+97d) | 2026-12-09 → 2027-03-17 (+98d) |  | 30d → -40.02d |  |
| R15 | **Road 23** | 2026-09-24 → 2026-08-20 (-35d) | 2026-12-26 → 2027-04-03 (+98d) |  |  |  |
| A88580 | Road Crossing Works | 2026-09-24 → 2026-08-20 A (-35d) | 2026-10-12 → 2026-09-28 A (-14d) | 0% → 100% | 30d → none |  |
| A88570 | Trenching & Bedding | 2026-10-13 → 2027-01-18 (+97d) | 2026-10-28 → 2027-02-03 (+98d) |  | 16d → -54.02d |  |
| A88590 | Pipe Laying | 2026-10-22 → 2027-01-27 (+97d) | 2026-11-11 → 2027-02-17 (+98d) |  | 16d → -54.02d |  |
| A88600 | Testing | 2026-11-12 → 2027-02-17 (+97d) | 2026-11-16 → 2027-02-22 (+98d) |  | 16d → -54.02d |  |
| A88610 | Backfilling & Compaction | 2026-11-17 → 2027-02-22 (+97d) | 2026-12-05 → 2027-03-13 (+98d) |  | 16d → -54.02d |  |
| A88620 | Chambers Construction works | 2026-11-17 → 2027-02-22 (+97d) | 2026-12-05 → 2027-03-13 (+98d) |  | 16d → -54.02d |  |
| A88630 | Valves & Fittings Installation | 2026-12-06 → 2027-03-13 (+97d) | 2026-12-26 → 2027-04-03 (+98d) |  | 16d → -54.02d |  |
| R16 | **Road 24** | 2026-09-24 → 2026-08-20 (-35d) | 2026-12-09 → 2027-03-17 (+98d) |  |  |  |
| A88510 | Road Crossing Works | 2026-09-24 → 2026-08-20 A (-35d) | 2026-10-12 → 2026-09-28 A (-14d) | 0% → 100% | 30d → none |  |
| A88500 | Trenching & Bedding | 2026-09-27 → 2027-01-02 (+97d) | 2026-10-12 → 2027-01-18 (+98d) |  | 30d → -45.02d |  |
| A88520 | Pipe Laying | 2026-10-06 → 2027-01-11 (+97d) | 2026-10-26 → 2027-02-01 (+98d) |  | 30d → -40.02d |  |
| A88530 | Testing | 2026-10-27 → 2027-02-01 (+97d) | 2026-10-31 → 2027-02-06 (+98d) |  | 30d → -40.02d |  |
| A88540 | Backfilling & Compaction | 2026-11-01 → 2027-02-06 (+97d) | 2026-11-18 → 2027-02-24 (+98d) |  | 30d → -40.02d |  |
| A88550 | Chambers Construction works | 2026-11-01 → 2027-02-06 (+97d) | 2026-11-18 → 2027-02-24 (+98d) |  | 30d → -40.02d |  |
| A88560 | Valves & Fittings Installation | 2026-11-19 → 2027-02-24 (+97d) | 2026-12-09 → 2027-03-17 (+98d) |  | 30d → -40.02d |  |
| R17 | **Road 25** | 2026-09-24 → 2026-08-20 (-35d) | 2026-12-09 → 2027-02-21 (+74d) |  |  |  |
| A88440 | Road Crossing Works | 2026-09-24 → 2026-08-20 A (-35d) | 2026-10-12 → 2026-09-28 A (-14d) | 0% → 100% | 30d → none |  |
| A88430 | Trenching & Bedding | 2026-09-27 → 2026-09-15 A (-12d) | 2026-10-12 → 2027-01-03 (+83d) | 0% → 92% | 30d → -32.14d |  |
| A88450 | Pipe Laying | 2026-10-06 → 2026-09-15 A (-21d) | 2026-10-26 → 2027-01-07 (+73d) | 0% → 92% | 30d → -19.02d |  |
| A88470 | Backfilling & Compaction | 2026-11-01 → 2026-09-15 A (-47d) | 2026-11-18 → 2027-01-13 (+56d) | 0% → 92% | 30d → -4.3d |  |
| A88460 | Testing | 2026-10-27 → 2027-01-07 (+72d) | 2026-10-31 → 2027-01-12 (+73d) |  | 30d → -19.02d |  |
| A88480 | Chambers Construction works | 2026-11-01 → 2027-01-12 (+72d) | 2026-11-18 → 2027-01-31 (+74d) |  | 30d → -19.02d |  |
| A88490 | Valves & Fittings Installation | 2026-11-19 → 2027-01-31 (+73d) | 2026-12-09 → 2027-02-21 (+74d) |  | 30d → -19.02d |  |
| R18 | **Road 26** | 2026-10-29 → 2026-08-20 (-70d) | 2027-01-13 → 2027-02-21 (+39d) |  |  |  |
| A88370 | Road Crossing Works | 2026-10-29 → 2026-08-20 A (-70d) | 2026-11-16 → 2026-09-28 A (-49d) | 0% → 100% | 0d → none | A58910, A54390 → A55140, A58910 |
| A88360 | Trenching & Bedding | 2026-11-01 → 2026-09-15 A (-47d) | 2026-11-16 → 2027-01-02 (+47d) | 0% → 93% | 0d → -15.28d |  |
| A88380 | Pipe Laying | 2026-11-10 → 2026-09-15 A (-56d) | 2026-11-30 → 2027-01-07 (+38d) | 0% → 93% | 0d → -19.02d |  |
| A88400 | Backfilling & Compaction | 2026-12-06 → 2026-09-15 A (-82d) | 2026-12-23 → 2027-01-13 (+21d) | 0% → 93% | 0d → -4.14d |  |
| A88390 | Testing | 2026-12-01 → 2027-01-07 (+37d) | 2026-12-05 → 2027-01-12 (+38d) |  | 0d → -19.02d |  |
| A88410 | Chambers Construction works | 2026-12-06 → 2027-01-12 (+37d) | 2026-12-23 → 2027-01-31 (+39d) |  | 0d → -19.02d |  |
| A88420 | Valves & Fittings Installation | 2026-12-24 → 2027-01-31 (+38d) | 2027-01-13 → 2027-02-21 (+39d) |  | 0d → -19.02d |  |
| R19 | **Road 27** | 2026-09-24 → 2026-08-20 (-35d) | 2026-11-25 → 2027-02-15 (+82d) |  |  |  |
| A88290 | Trenching & Bedding | 2026-09-27 → 2026-08-20 A (-38d) | 2026-10-03 → 2026-09-28 A (-5d) | 0% → 100% | 42d → none |  |
| A88300 | Road Crossing Works | 2026-09-24 → 2026-08-20 A (-35d) | 2026-10-03 → 2026-09-28 A (-5d) | 0% → 100% | 2d → none |  |
| A88310 | Pipe Laying | 2026-10-06 → 2026-08-20 A (-47d) | 2026-10-12 → 2026-09-28 A (-14d) | 0% → 100% | 42d → none |  |
| A88330 | Backfilling & Compaction | 2026-10-18 → 2026-08-20 A (-59d) | 2026-10-24 → 2026-09-28 A (-26d) | 0% → 100% | 88d → none |  |
| A88320 | Testing | 2026-10-13 → 2027-01-02 (+81d) | 2026-10-17 → 2027-01-06 (+81d) |  | 42d → -14.02d |  |
| A88340 | Chambers Construction works | 2026-10-18 → 2027-01-06 (+80d) | 2026-11-04 → 2027-01-25 (+82d) |  | 42d → -14.02d |  |
| A88350 | Valves & Fittings Installation | 2026-11-05 → 2027-01-25 (+81d) | 2026-11-25 → 2027-02-15 (+82d) |  | 42d → -14.02d |  |
| R110 | **Collector 2** | 2026-10-04 → 2026-08-20 (-45d) | 2026-12-16 → 2027-02-16 (+62d) |  |  |  |
| A88230 | Road Crossing Works | 2026-10-04 → 2026-08-20 A (-45d) | 2026-10-12 → 2026-09-28 A (-14d) | 0% → 100% | 2d → none |  |
| A88220 | Trenching & Bedding | 2026-10-04 → 2026-09-15 A (-19d) | 2026-10-12 → 2027-01-02 (+82d) | 0% → 92% | 24d → -15.46d |  |
| A88240 | Pipe Laying | 2026-10-13 → 2026-09-15 A (-28d) | 2026-11-02 → 2027-01-03 (+62d) | 0% → 92% | 24d → -15.46d |  |
| A88260 | Backfilling & Compaction | 2026-11-08 → 2026-09-15 A (-54d) | 2026-11-25 → 2027-01-09 (+45d) | 0% → 92% | 24d → -0.74d |  |
| A88250 | Testing | 2026-11-03 → 2027-01-03 (+61d) | 2026-11-07 → 2027-01-07 (+61d) |  | 24d → -15.46d |  |
| A88270 | Chambers Construction works | 2026-11-08 → 2027-01-07 (+60d) | 2026-11-25 → 2027-01-26 (+62d) |  | 24d → -15.46d |  |
| A88280 | Valves & Fittings Installation | 2026-11-26 → 2027-01-26 (+61d) | 2026-12-16 → 2027-02-16 (+62d) |  | 24d → -15.46d |  |
| R111 | **Arterial 1** | 2026-10-13 → 2026-08-20 (-54d) | 2026-12-26 → 2027-02-21 (+57d) |  |  |  |
| A88160 | Road Crossing Works | 2026-10-13 → 2026-08-20 A (-54d) | 2026-10-21 → 2026-09-28 A (-23d) | 0% → 100% | 2d → none |  |
| A88150 | Trenching & Bedding | 2026-10-13 → 2026-09-15 A (-28d) | 2026-10-21 → 2027-01-02 (+73d) | 0% → 97% | 2d → -58.26d |  |
| A88170 | Pipe Laying | 2026-10-22 → 2026-09-15 A (-37d) | 2026-11-11 → 2027-01-07 (+57d) | 0% → 97% | 16d → -19.02d |  |
| A88190 | Backfilling & Compaction | 2026-11-17 → 2026-09-15 A (-63d) | 2026-12-05 → 2027-01-12 (+38d) | 0% → 97% | 16d → -3.5d |  |
| A88180 | Testing | 2026-11-12 → 2027-01-07 (+56d) | 2026-11-16 → 2027-01-12 (+57d) |  | 16d → -19.02d |  |
| A88200 | Chambers Construction works | 2026-11-17 → 2027-01-12 (+56d) | 2026-12-05 → 2027-01-31 (+57d) |  | 16d → -19.02d |  |
| A88210 | Valves & Fittings Installation | 2026-12-06 → 2027-01-31 (+56d) | 2026-12-26 → 2027-02-21 (+57d) |  | 16d → -19.02d |  |
| Zone B | **SEWEGE NETWORK** | 2026-03-04 → 2026-07-04 (+122d) | 2027-01-19 → 2026-12-22 (-28d) |  |  |  |
| AR 01 | **AR 01** | 2026-05-12 → 2026-07-04 (+53d) | 2026-07-21 → 2026-11-15 (+117d) |  |  |  |
| MH-3.10 / MH-3.11 | **MH-3.10 / MH-3.11** | 2026-05-12 → 2026-10-26 (+167d) | 2026-07-07 → 2026-11-15 (+131d) |  |  |  |
| A49900 | Excavation | 2026-05-12 → 2026-10-26 (+167d) | 2026-05-16 → 2026-10-29 (+166d) |  | 56d → -11d |  |
| A49910 | Pipe Laying | 2026-05-17 → 2026-10-31 (+167d) | 2026-05-25 → 2026-11-08 (+167d) |  | 64d → -11d |  |
| A49920 | Install Manhole | 2026-06-29 → 2026-10-31 (+124d) | 2026-07-02 → 2026-11-03 (+124d) |  | 33d → -5d | A49900, A10230 → A49900 |

| ID | Task | Start | Finish | Complete | Total float | Predecessors |
| --- | --- | --- | --- | --- | --- | --- |
| A49930 | Testing & Inspection | 2026-05-26 → 2026-11-09 (+167d) | 2026-05-27 → 2026-11-10 (+167d) |  | 64d → -11d |  |
| A49940 | Backfilling & Compaction | 2026-07-04 → 2026-11-11 (+130d) | 2026-07-07 → 2026-11-15 (+131d) |  | 33d → -11d |  |
| MH-3.7 / MH-3.8 | **MH-3.7 / MH-3.8** | 2026-05-17 → 2026-07-04 (+48d) | 2026-07-12 → 2026-08-05 (+24d) |  |  |  |
| A49950 | Excavation | 2026-05-17 → 2026-07-04 A (+48d) | 2026-05-20 → 2026-08-05 A (+77d) | 0% → 100% | 56d → none |  |
| A49960 | Pipe Laying | 2026-05-21 → 2026-07-04 A (+44d) | 2026-05-30 → 2026-08-05 A (+67d) | 0% → 100% | 64d → none |  |
| A49970 | Install Manhole | 2026-06-29 → 2026-07-04 A (+5d) | 2026-07-02 → 2026-08-05 A (+34d) | 0% → 100% | 37d → none | A49950, A10230 → A49950 |
| A49980 | Testing & Inspection | 2026-05-31 → 2026-07-04 A (+34d) | 2026-06-01 → 2026-08-05 A (+65d) | 0% → 100% | 64d → none |  |
| A49990 | Backfilling & Compaction | 2026-07-08 → 2026-07-04 A (-4d) | 2026-07-12 → 2026-08-05 A (+24d) | 0% → 100% | 33d → none |  |
| MH-3.8 / MH-3.9 | **MH-3.8 / MH-3.9** | 2026-05-21 → 2026-07-04 (+44d) | 2026-07-16 → 2026-08-05 (+20d) |  |  |  |
| A50000 | Excavation | 2026-05-21 → 2026-07-04 A (+44d) | 2026-05-25 → 2026-08-05 A (+72d) | 0% → 100% | 56d → none |  |
| A50010 | Pipe Laying | 2026-05-26 → 2026-07-04 A (+39d) | 2026-06-03 → 2026-08-05 A (+63d) | 0% → 100% | 64d → none |  |
| A50020 | Install Manhole | 2026-06-29 → 2026-07-04 A (+5d) | 2026-07-02 → 2026-08-05 A (+34d) | 0% → 100% | 41d → none | A50000, A10230 → A50000 |
| A50030 | Testing & Inspection | 2026-06-04 → 2026-07-04 A (+30d) | 2026-06-06 → 2026-08-05 A (+60d) | 0% → 100% | 64d → none |  |
| A50040 | Backfilling & Compaction | 2026-07-13 → 2026-07-04 A (-9d) | 2026-07-16 → 2026-08-05 A (+20d) | 0% → 100% | 33d → none |  |
| MH-3.9 / MH-3.10 | **MH-3.9 / MH-3.10** | 2026-05-26 → 2026-07-04 (+39d) | 2026-07-21 → 2026-08-05 (+15d) |  |  |  |
| A50050 | Excavation | 2026-05-26 → 2026-07-04 A (+39d) | 2026-05-30 → 2026-08-05 A (+67d) | 0% → 100% | 56d → none |  |
| A50060 | Pipe Laying | 2026-05-31 → 2026-07-04 A (+34d) | 2026-06-08 → 2026-08-05 A (+58d) | 0% → 100% | 64d → none |  |
| A50070 | Install Manhole | 2026-06-29 → 2026-07-04 A (+5d) | 2026-07-02 → 2026-08-05 A (+34d) | 0% → 100% | 45d → none | A50050, A10230 → A50050 |
| A50080 | Testing & Inspection | 2026-06-09 → 2026-07-04 A (+25d) | 2026-06-10 → 2026-08-05 A (+56d) | 0% → 100% | 64d → none |  |
| A50090 | Backfilling & Compaction | 2026-07-18 → 2026-07-04 A (-14d) | 2026-07-21 → 2026-08-05 A (+15d) | 0% → 100% | 33d → none |  |
| EX LR 19 | **EX LR 19** | 2026-05-31 → 2026-07-04 (+34d) | 2026-07-16 → 2026-08-05 (+20d) |  |  |  |
| MH-3.42 / MH-3.43 | **MH-3.42 / MH-3.43** | 2026-05-31 → 2026-07-04 (+34d) | 2026-07-07 → 2026-08-05 (+29d) |  |  |  |
| A50100 | Excavation | 2026-05-31 → 2026-07-04 A (+34d) | 2026-06-03 → 2026-08-05 A (+63d) | 0% → 100% | 56d → none |  |
| A50110 | Pipe Laying | 2026-06-04 → 2026-07-04 A (+30d) | 2026-06-13 → 2026-08-05 A (+53d) | 0% → 100% | 56d → none |  |
| A50120 | Install Manhole | 2026-06-29 → 2026-07-04 A (+5d) | 2026-07-02 → 2026-08-05 A (+34d) | 0% → 100% | 41d → none | A50100, A10230 → A50100 |
| A50130 | Testing & Inspection | 2026-06-14 → 2026-07-04 A (+20d) | 2026-06-15 → 2026-08-05 A (+51d) | 0% → 100% | 56d → none |  |
| A50140 | Backfilling & Compaction | 2026-07-04 A | 2026-07-07 → 2026-08-05 A (+29d) | 0% → 100% | 41d → none |  |
| MH-3.43 / MH-3.44 | **MH-3.43 / MH-3.44** | 2026-06-04 → 2026-07-04 (+30d) | 2026-07-12 → 2026-08-05 (+24d) |  |  |  |
| A50150 | Excavation | 2026-06-04 → 2026-07-04 A (+30d) | 2026-06-08 → 2026-08-05 A (+58d) | 0% → 100% | 56d → none |  |
| A50160 | Pipe Laying | 2026-06-09 → 2026-07-04 A (+25d) | 2026-06-17 → 2026-08-05 A (+49d) | 0% → 100% | 56d → none |  |
| A50170 | Install Manhole | 2026-06-29 → 2026-07-04 A (+5d) | 2026-07-02 → 2026-08-05 A (+34d) | 0% → 100% | 45d → none | A50150, A10230 → A50150 |
| A50180 | Testing & Inspection | 2026-06-18 → 2026-07-04 A (+16d) | 2026-06-20 → 2026-08-05 A (+46d) | 0% → 100% | 56d → none |  |
| A50190 | Backfilling & Compaction | 2026-07-08 → 2026-07-04 A (-4d) | 2026-07-12 → 2026-08-05 A (+24d) | 0% → 100% | 41d → none |  |
| MH-3.44 / MH-3.45 | **MH-3.44 / MH-3.45** | 2026-06-09 → 2026-07-04 (+25d) | 2026-07-16 → 2026-08-05 (+20d) |  |  |  |
| A50200 | Excavation | 2026-06-09 → 2026-07-04 A (+25d) | 2026-06-13 → 2026-08-05 A (+53d) | 0% → 100% | 56d → none |  |
| A50210 | Pipe Laying | 2026-06-14 → 2026-07-04 A (+20d) | 2026-06-22 → 2026-08-05 A (+44d) | 0% → 100% | 56d → none |  |
| A50220 | Install Manhole | 2026-06-29 → 2026-07-04 A (+5d) | 2026-07-02 → 2026-08-05 A (+34d) | 0% → 100% | 49d → none | A50200, A10230 → A50200 |
| A50230 | Testing & Inspection | 2026-06-23 → 2026-07-04 A (+11d) | 2026-06-24 → 2026-08-05 A (+42d) | 0% → 100% | 56d → none |  |
| A50240 | Backfilling & Compaction | 2026-07-13 → 2026-07-04 A (-9d) | 2026-07-16 → 2026-08-05 A (+20d) | 0% → 100% | 41d → none |  |
| EX LR 20 | **EX LR 20** | 2026-06-04 → 2026-07-04 (+30d) | 2026-08-09 → 2026-11-19 (+102d) |  |  |  |
| MH-3.36 / MH-3.37 | **MH-3.36 / MH-3.37** | 2026-06-04 → 2026-07-04 (+30d) | 2026-07-07 → 2026-08-05 (+29d) |  |  |  |
| A50250 | Excavation | 2026-06-04 → 2026-07-04 A (+30d) | 2026-06-08 → 2026-08-05 A (+58d) | 0% → 100% | 60d → none |  |
| A50260 | Pipe Laying | 2026-06-09 → 2026-07-04 A (+25d) | 2026-06-17 → 2026-08-05 A (+49d) | 0% → 100% | 60d → none |  |
| A50270 | Install Manhole | 2026-06-29 → 2026-07-04 A (+5d) | 2026-07-02 → 2026-08-05 A (+34d) | 0% → 100% | 49d → none | A50250, A10230 → A50250 |
| A50280 | Testing & Inspection | 2026-06-18 → 2026-07-04 A (+16d) | 2026-06-20 → 2026-08-05 A (+46d) | 0% → 100% | 60d → none |  |
| A50290 | Backfilling & Compaction | 2026-07-04 A | 2026-07-07 → 2026-08-05 A (+29d) | 0% → 100% | 49d → none |  |
| MH-3.37 / MH-3.38 | **MH-3.37 / MH-3.38** | 2026-06-09 → 2026-07-04 (+25d) | 2026-07-21 → 2026-08-05 (+15d) |  |  |  |
| A50300 | Excavation | 2026-06-09 → 2026-07-04 A (+25d) | 2026-06-13 → 2026-08-05 A (+53d) | 0% → 100% | 60d → none |  |
| A50310 | Pipe Laying | 2026-06-14 → 2026-07-04 A (+20d) | 2026-06-22 → 2026-08-05 A (+44d) | 0% → 100% | 60d → none |  |
| A50320 | Install Manhole | 2026-06-29 → 2026-07-04 A (+5d) | 2026-07-02 → 2026-08-05 A (+34d) | 0% → 100% | 53d → none | A50300, A10230 → A50300 |
| A50330 | Testing & Inspection | 2026-06-23 → 2026-07-04 A (+11d) | 2026-06-24 → 2026-08-05 A (+42d) | 0% → 100% | 60d → none |  |
| A50340 | Backfilling & Compaction | 2026-07-18 → 2026-07-04 A (-14d) | 2026-07-21 → 2026-08-05 A (+15d) | 0% → 100% | 41d → none |  |
| MH-3.38 / MH-3.39 | **MH-3.38 / MH-3.39** | 2026-06-14 → 2026-07-04 (+20d) | 2026-07-26 → 2026-08-05 (+10d) |  |  |  |
| A50350 | Excavation | 2026-06-14 → 2026-07-04 A (+20d) | 2026-06-17 → 2026-08-05 A (+49d) | 0% → 100% | 60d → none |  |
| A50360 | Pipe Laying | 2026-06-18 → 2026-07-04 A (+16d) | 2026-06-27 → 2026-08-05 A (+39d) | 0% → 100% | 60d → none |  |
| A50370 | Install Manhole | 2026-06-29 → 2026-07-04 A (+5d) | 2026-07-02 → 2026-08-05 A (+34d) | 0% → 100% | 57d → none | A50350, A10230 → A50350 |
| A50380 | Testing & Inspection | 2026-06-28 → 2026-07-04 A (+6d) | 2026-06-29 → 2026-08-05 A (+37d) | 0% → 100% | 60d → none |  |
| A50390 | Backfilling & Compaction | 2026-07-22 → 2026-07-04 A (-18d) | 2026-07-26 → 2026-08-05 A (+10d) | 0% → 100% | 41d → none |  |
| MH-3.39 / MH-3.40 | **MH-3.39 / MH-3.40** | 2026-06-18 → 2026-07-04 (+16d) | 2026-07-30 → 2026-09-05 (+37d) |  |  |  |
| A50400 | Excavation | 2026-06-18 → 2026-07-04 A (+16d) | 2026-06-22 → 2026-08-05 A (+44d) | 0% → 100% | 60d → none |  |
| A50410 | Pipe Laying | 2026-06-23 → 2026-08-04 A (+42d) | 2026-07-01 → 2026-09-05 A (+66d) | 0% → 100% | 60d → none |  |
| A50420 | Install Manhole | 2026-06-29 → 2026-08-04 A (+36d) | 2026-07-02 → 2026-09-05 A (+65d) | 0% → 100% | 61d → none | A50400, A10230 → A50400 |
| A50430 | Testing & Inspection | 2026-07-02 → 2026-08-04 A (+33d) | 2026-07-04 → 2026-09-05 A (+63d) | 0% → 100% | 60d → none |  |
| A50440 | Backfilling & Compaction | 2026-07-27 → 2026-08-04 A (+8d) | 2026-07-30 → 2026-09-05 A (+37d) | 0% → 100% | 41d → none |  |
| MH-3.40 / MH-3.41 | **MH-3.40 / MH-3.41** | 2026-06-23 → 2026-07-04 (+11d) | 2026-08-04 → 2026-08-05 (+1d) |  |  |  |
| A50450 | Excavation | 2026-06-23 → 2026-07-04 A (+11d) | 2026-06-27 → 2026-08-05 A (+39d) | 0% → 100% | 60d → none |  |
| A50460 | Pipe Laying | 2026-06-28 → 2026-07-04 A (+6d) | 2026-07-06 → 2026-08-05 A (+30d) | 0% → 100% | 60d → none |  |
| A50470 | Install Manhole | 2026-06-29 → 2026-07-04 A (+5d) | 2026-07-02 → 2026-08-05 A (+34d) | 0% → 100% | 65d → none | A50450, A10230 → A50450 |
| A50480 | Testing & Inspection | 2026-07-07 → 2026-07-04 A (-3d) | 2026-07-08 → 2026-08-05 A (+28d) | 0% → 100% | 60d → none |  |
| A50490 | Backfilling & Compaction | 2026-08-01 → 2026-07-04 A (-28d) | 2026-08-04 → 2026-08-05 A (+1d) | 0% → 100% | 41d → none |  |

| ID | Task | Start | Finish | Complete | Total float | Predecessors |
| --- | --- | --- | --- | --- | --- | --- |
| MH-3.41 / MH-3.42 | **MH-3.41 / MH-3.42** | 2026-06-28 → 2026-10-31 (+125d) | 2026-08-09 → 2026-11-19 (+102d) |  |  |  |
| A50500 | Excavation | 2026-06-28 → 2026-10-31 (+125d) | 2026-07-01 → 2026-11-03 (+125d) |  | 60d → 1d |  |
| A50510 | Pipe Laying | 2026-07-02 → 2026-11-04 (+125d) | 2026-07-11 → 2026-11-12 (+124d) |  | 60d → 1d |  |
| A50520 | Install Manhole | 2026-07-02 → 2026-11-04 (+125d) | 2026-07-06 → 2026-11-08 (+125d) |  | 66d → 7d | A50500, A10230 → A50500 |
| A50530 | Testing & Inspection | 2026-07-12 → 2026-11-14 (+125d) | 2026-07-13 → 2026-11-15 (+125d) |  | 60d → 1d |  |
| A50540 | Backfilling & Compaction | 2026-08-05 → 2026-11-16 (+103d) | 2026-08-09 → 2026-11-19 (+102d) |  | 41d → 1d |  |
| EX LR 26 | **EX LR 26** | 2026-06-09 → 2026-08-04 (+56d) | 2026-07-07 → 2026-09-05 (+60d) |  |  |  |
| MH-3.11 / MH-3.12 | **MH-3.11 / MH-3.12** | 2026-06-09 → 2026-08-04 (+56d) | 2026-07-07 → 2026-09-05 (+60d) |  |  |  |
| A50550 | Excavation | 2026-06-09 → 2026-08-04 A (+56d) | 2026-06-13 → 2026-09-05 A (+84d) | 0% → 100% | 64d → none |  |
| A50560 | Pipe Laying | 2026-06-14 → 2026-08-04 A (+51d) | 2026-06-22 → 2026-09-05 A (+75d) | 0% → 100% | 64d → none |  |
| A50570 | Install Manhole | 2026-06-29 → 2026-08-04 A (+36d) | 2026-07-02 → 2026-09-05 A (+65d) | 0% → 100% | 57d → none | A50550, A10230 → A50550 |
| A50580 | Testing & Inspection | 2026-06-23 → 2026-08-04 A (+42d) | 2026-06-24 → 2026-09-05 A (+73d) | 0% → 100% | 64d → none |  |
| A50590 | Backfilling & Compaction | 2026-07-04 → 2026-08-04 A (+31d) | 2026-07-07 → 2026-09-05 A (+60d) | 0% → 100% | 57d → none |  |
| Ex. AR 01 | **Ex. AR 01** | 2026-06-14 → 2026-08-04 (+51d) | 2026-08-27 → 2026-11-29 (+94d) |  |  |  |
| EX. MH Connection / MH-3.1 | **EX. MH Connection / MH-3.1** | 2026-06-14 → 2026-10-31 (+139d) | 2026-07-07 → 2026-11-19 (+135d) |  |  |  |
| A50600 | Excavation | 2026-06-14 → 2026-10-31 (+139d) | 2026-06-17 → 2026-11-03 (+139d) |  | 64d → -7d |  |
| A50610 | Pipe Laying | 2026-06-18 → 2026-11-04 (+139d) | 2026-06-27 → 2026-11-12 (+138d) |  | 64d → -7d |  |
| A50620 | Install Manhole | 2026-06-29 → 2026-11-04 (+128d) | 2026-07-02 → 2026-11-08 (+129d) |  | 61d → -1d | A50600, A10230 → A50600 |
| A50630 | Testing & Inspection | 2026-06-28 → 2026-11-14 (+139d) | 2026-06-29 → 2026-11-15 (+139d) |  | 64d → -7d |  |
| A50640 | Backfilling & Compaction | 2026-07-04 → 2026-11-16 (+135d) | 2026-07-07 → 2026-11-19 (+135d) |  | 61d → -7d |  |
| MH-3.1 / MH-3.2 | **MH-3.1 / MH-3.2** | 2026-06-18 → 2026-11-04 (+139d) | 2026-07-12 → 2026-11-24 (+135d) |  |  |  |
| A50650 | Excavation | 2026-06-18 → 2026-11-04 (+139d) | 2026-06-22 → 2026-11-08 (+139d) |  | 64d → -7d |  |
| A50660 | Pipe Laying | 2026-06-23 → 2026-11-09 (+139d) | 2026-07-01 → 2026-11-17 (+139d) |  | 64d → -7d |  |
| A50670 | Install Manhole | 2026-06-29 → 2026-11-09 (+133d) | 2026-07-02 → 2026-11-12 (+133d) |  | 65d → -1d | A50650, A10230 → A50650 |
| A50680 | Testing & Inspection | 2026-07-02 → 2026-11-18 (+139d) | 2026-07-04 → 2026-11-19 (+138d) |  | 64d → -7d |  |
| A50690 | Backfilling & Compaction | 2026-07-08 → 2026-11-21 (+136d) | 2026-07-12 → 2026-11-24 (+135d) |  | 61d → -7d |  |
| MH-3.2 / MH-3.3 | **MH-3.2 / MH-3.3** | 2026-06-23 → 2026-11-09 (+139d) | 2026-07-16 → 2026-11-29 (+136d) |  |  |  |
| A50700 | Excavation | 2026-06-23 → 2026-11-09 (+139d) | 2026-06-27 → 2026-11-12 (+138d) |  | 64d → -7d |  |
| A50710 | Pipe Laying | 2026-06-28 → 2026-11-14 (+139d) | 2026-07-06 → 2026-11-22 (+139d) |  | 64d → -7d |  |
| A50720 | Install Manhole | 2026-06-28 → 2026-11-14 (+139d) | 2026-07-01 → 2026-11-17 (+139d) |  | 70d → -1d |  |
| A50730 | Testing & Inspection | 2026-07-07 → 2026-11-23 (+139d) | 2026-07-08 → 2026-11-24 (+139d) |  | 64d → -7d |  |
| A50740 | Backfilling & Compaction | 2026-07-13 → 2026-11-25 (+135d) | 2026-07-16 → 2026-11-29 (+136d) |  | 61d → -7d |  |
| MH-3.3 / MH-3.4 | **MH-3.3 / MH-3.4** | 2026-06-28 → 2026-08-04 (+37d) | 2026-08-13 → 2026-09-05 (+23d) |  |  |  |
| A50750 | Excavation | 2026-06-28 → 2026-08-04 A (+37d) | 2026-07-01 → 2026-09-05 A (+66d) | 0% → 100% | 64d → none |  |
| A50760 | Pipe Laying | 2026-07-02 → 2026-08-04 A (+33d) | 2026-07-11 → 2026-09-05 A (+56d) | 0% → 100% | 64d → none |  |
| A50770 | Install Manhole | 2026-07-02 → 2026-08-04 A (+33d) | 2026-07-06 → 2026-09-05 A (+61d) | 0% → 100% | 70d → none |  |
| A50780 | Testing & Inspection | 2026-07-12 → 2026-08-04 A (+23d) | 2026-07-13 → 2026-09-05 A (+54d) | 0% → 100% | 64d → none |  |
| A50790 | Backfilling & Compaction | 2026-08-10 → 2026-08-04 A (-6d) | 2026-08-13 → 2026-09-05 A (+23d) | 0% → 100% | 41d → none |  |
| MH-3.4 / MH-3.5 | **MH-3.4 / MH-3.5** | 2026-07-02 → 2026-08-04 (+33d) | 2026-08-18 → 2026-09-05 (+18d) |  |  |  |
| A50800 | Excavation | 2026-07-02 → 2026-08-04 A (+33d) | 2026-07-06 → 2026-09-05 A (+61d) | 0% → 100% | 64d → none |  |
| A50810 | Pipe Laying | 2026-07-07 → 2026-08-04 A (+28d) | 2026-07-15 → 2026-09-05 A (+52d) | 0% → 100% | 64d → none |  |
| A50820 | Install Manhole | 2026-07-07 → 2026-08-04 A (+28d) | 2026-07-11 → 2026-09-05 A (+56d) | 0% → 100% | 70d → none |  |
| A50830 | Testing & Inspection | 2026-07-16 → 2026-08-04 A (+19d) | 2026-07-18 → 2026-09-05 A (+49d) | 0% → 100% | 64d → none |  |
| A50840 | Backfilling & Compaction | 2026-08-15 → 2026-08-04 A (-11d) | 2026-08-18 → 2026-09-05 A (+18d) | 0% → 100% | 41d → none |  |
| MH-3.5 / MH-3.6 | **MH-3.5 / MH-3.6** | 2026-07-07 → 2026-08-04 (+28d) | 2026-08-23 → 2026-09-05 (+13d) |  |  |  |
| A50850 | Excavation | 2026-07-07 → 2026-08-04 A (+28d) | 2026-07-11 → 2026-09-05 A (+56d) | 0% → 100% | 64d → none |  |
| A50860 | Pipe Laying | 2026-07-12 → 2026-08-04 A (+23d) | 2026-07-20 → 2026-09-05 A (+47d) | 0% → 100% | 64d → none |  |
| A50870 | Install Manhole | 2026-07-12 → 2026-08-04 A (+23d) | 2026-07-15 → 2026-09-05 A (+52d) | 0% → 100% | 70d → none |  |
| A50880 | Testing & Inspection | 2026-07-21 → 2026-08-04 A (+14d) | 2026-07-22 → 2026-09-05 A (+45d) | 0% → 100% | 64d → none |  |
| A50890 | Backfilling & Compaction | 2026-08-19 → 2026-08-04 A (-15d) | 2026-08-23 → 2026-09-05 A (+13d) | 0% → 100% | 41d → none |  |
| MH-3.6 / MH-3.7 | **MH-3.6 / MH-3.7** | 2026-07-12 → 2026-08-04 (+23d) | 2026-08-27 → 2026-09-05 (+9d) |  |  |  |
| A50900 | Excavation | 2026-07-12 → 2026-08-04 A (+23d) | 2026-07-15 → 2026-09-05 A (+52d) | 0% → 100% | 64d → none |  |
| A50910 | Pipe Laying | 2026-07-16 → 2026-08-04 A (+19d) | 2026-07-25 → 2026-09-05 A (+42d) | 0% → 100% | 64d → none |  |
| A50920 | Install Manhole | 2026-07-16 → 2026-08-04 A (+19d) | 2026-07-20 → 2026-09-05 A (+47d) | 0% → 100% | 70d → none |  |
| A50930 | Testing & Inspection | 2026-07-26 → 2026-08-04 A (+9d) | 2026-07-27 → 2026-09-05 A (+40d) | 0% → 100% | 64d → none |  |
| A50940 | Backfilling & Compaction | 2026-08-24 → 2026-08-04 A (-20d) | 2026-08-27 → 2026-09-05 A (+9d) | 0% → 100% | 41d → none |  |
| LR 18 | **LR 18** | 2026-03-09 → 2026-08-04 (+148d) | 2026-04-26 → 2026-09-05 (+132d) |  |  |  |
| MH-3.48 / MH-3.49 | **MH-3.48 / MH-3.49** | 2026-03-09 → 2026-08-04 (+148d) | 2026-03-29 → 2026-09-05 (+160d) |  |  |  |
| A50950 | Excavation | 2026-03-09 → 2026-08-04 A (+148d) | 2026-03-12 → 2026-09-05 A (+177d) | 0% → 100% | 159d → none |  |
| A50960 | Pipe Laying | 2026-03-14 → 2026-08-04 A (+143d) | 2026-03-22 → 2026-09-05 A (+167d) | 0% → 100% | 159d → none |  |
| A50970 | Install Manhole | 2026-03-14 → 2026-08-04 A (+143d) | 2026-03-17 → 2026-09-05 A (+172d) | 0% → 100% | 165d → none |  |
| A50980 | Testing & Inspection | 2026-03-23 → 2026-08-04 A (+134d) | 2026-03-24 → 2026-09-05 A (+165d) | 0% → 100% | 159d → none |  |
| A50990 | Backfilling & Compaction | 2026-03-25 → 2026-08-04 A (+132d) | 2026-03-29 → 2026-09-05 A (+160d) | 0% → 100% | 159d → none |  |
| MH-3.49 / MH-3.50 | **MH-3.49 / MH-3.50** | 2026-03-14 → 2026-08-04 (+143d) | 2026-04-02 → 2026-09-05 (+156d) |  |  |  |
| A51000 | Excavation | 2026-03-14 → 2026-08-04 A (+143d) | 2026-03-17 → 2026-09-05 A (+172d) | 0% → 100% | 159d → none |  |
| A51010 | Pipe Laying | 2026-03-18 → 2026-08-04 A (+139d) | 2026-03-22 → 2026-09-05 A (+167d) | 0% → 100% | 163d → none |  |
| A51020 | Install Manhole | 2026-03-18 → 2026-08-04 A (+139d) | 2026-03-22 → 2026-09-05 A (+167d) | 0% → 100% | 165d → none |  |
| A51030 | Testing & Inspection | 2026-03-23 → 2026-08-04 A (+134d) | 2026-03-24 → 2026-09-05 A (+165d) | 0% → 100% | 163d → none |  |
| A51040 | Backfilling & Compaction | 2026-03-30 → 2026-08-04 A (+127d) | 2026-04-02 → 2026-09-05 A (+156d) | 0% → 100% | 159d → none |  |
| MH-3.49.0 / MH-3.49.1 | **MH-3.49.0 / MH-3.49.1** | 2026-03-18 → 2026-08-04 (+139d) | 2026-04-14 → 2026-09-05 (+144d) |  |  |  |

| ID | Task | Start | Finish | Complete | Total float |
| --- | --- | --- | --- | --- | --- |
| A51050 | Excavation | 2026-03-18 → 2026-08-04 A (+139d) | 2026-03-22 → 2026-09-05 A (+167d) | 0% → 100% | 159d → none |
| A51060 | Pipe Laying | 2026-03-23 → 2026-08-04 A (+134d) | 2026-03-31 → 2026-09-05 A (+158d) | 0% → 100% | 159d → none |
| A51070 | Install Manhole | 2026-03-23 → 2026-08-04 A (+134d) | 2026-03-26 → 2026-09-05 A (+163d) | 0% → 100% | 165d → none |
| A51080 | Testing & Inspection | 2026-04-01 → 2026-08-04 A (+125d) | 2026-04-02 → 2026-09-05 A (+156d) | 0% → 100% | 159d → none |
| A51090 | Backfilling & Compaction | 2026-04-04 → 2026-08-04 A (+122d) | 2026-04-14 → 2026-09-05 A (+144d) | 0% → 100% | 159d → none |
| MH-3.50 / MH-3.51 | **MH-3.50 / MH-3.51** | 2026-03-23 → 2026-08-04 (+134d) | 2026-04-26 → 2026-09-05 (+132d) |  |  |
| A51100 | Excavation | 2026-03-23 → 2026-08-04 A (+134d) | 2026-03-26 → 2026-09-05 A (+163d) | 0% → 100% | 169d → none |
| A51110 | Pipe Laying | 2026-03-28 → 2026-08-04 A (+129d) | 2026-03-31 → 2026-09-05 A (+158d) | 0% → 100% | 169d → none |
| A51120 | Install Manhole | 2026-03-28 → 2026-08-04 A (+129d) | 2026-03-31 → 2026-09-05 A (+158d) | 0% → 100% | 171d → none |
| A51130 | Testing & Inspection | 2026-04-01 → 2026-08-04 A (+125d) | 2026-04-02 → 2026-09-05 A (+156d) | 0% → 100% | 169d → none |
| A51140 | Backfilling & Compaction | 2026-04-15 → 2026-08-04 A (+111d) | 2026-04-26 → 2026-09-05 A (+132d) | 0% → 100% | 159d → none |
| LR 19 | **LR 19** | 2026-03-04 → 2026-08-04 (+153d) | 2026-04-12 → 2026-10-04 (+175d) |  |  |
| MH-3.45 / MH-3.46 | **MH-3.45 / MH-3.46** | 2026-03-04 → 2026-08-04 (+153d) | 2026-03-26 → 2026-10-04 (+192d) |  |  |
| A51150 | Excavation | 2026-03-04 → 2026-08-04 A (+153d) | 2026-03-08 → 2026-09-05 A (+181d) | 0% → 100% | 171d → none |
| A51160 | Pipe Laying | 2026-03-09 → 2026-08-04 A (+148d) | 2026-03-12 → 2026-09-05 A (+177d) | 0% → 100% | 171d → none |
| A51170 | Install Manhole | 2026-03-09 → 2026-08-04 A (+148d) | 2026-03-12 → 2026-09-05 A (+177d) | 0% → 100% | 173d → none |
| A51190 | Backfilling & Compaction | 2026-03-16 → 2026-08-04 A (+141d) | 2026-03-26 → 2026-09-05 A (+163d) | 0% → 100% | 171d → none |
| A51180 | Testing & Inspection | 2026-03-14 → 2026-10-03 (+203d) | 2026-03-15 → 2026-10-04 (+203d) |  | 171d → 57d |
| MH-3.46 / MH-3.47 | **MH-3.46 / MH-3.47** | 2026-03-09 → 2026-08-04 (+148d) | 2026-04-07 → 2026-10-04 (+180d) |  |  |
| A51200 | Excavation | 2026-03-09 → 2026-08-04 A (+148d) | 2026-03-12 → 2026-09-05 A (+177d) | 0% → 100% | 173d → none |
| A51210 | Pipe Laying | 2026-03-14 → 2026-08-04 A (+143d) | 2026-03-22 → 2026-09-05 A (+167d) | 0% → 100% | 173d → none |
| A51220 | Install Manhole | 2026-03-14 → 2026-08-04 A (+143d) | 2026-03-17 → 2026-09-05 A (+172d) | 0% → 100% | 179d → none |
| A51240 | Backfilling & Compaction | 2026-03-28 → 2026-08-04 A (+129d) | 2026-04-07 → 2026-09-05 A (+151d) | 0% → 100% | 171d → none |
| A51230 | Testing & Inspection | 2026-03-23 → 2026-10-03 (+194d) | 2026-03-24 → 2026-10-04 (+194d) |  | 173d → 57d |
| MH-3.47 / MH-3.48 | **MH-3.47 / MH-3.48** | 2026-03-14 → 2026-08-04 (+143d) | 2026-04-12 → 2026-10-04 (+175d) |  |  |
| A51250 | Excavation | 2026-03-14 → 2026-08-04 A (+143d) | 2026-03-17 → 2026-09-05 A (+172d) | 0% → 100% | 179d → none |
| A51260 | Pipe Laying | 2026-03-18 → 2026-08-04 A (+139d) | 2026-03-26 → 2026-09-05 A (+163d) | 0% → 100% | 179d → none |
| A51270 | Install Manhole | 2026-03-18 → 2026-08-04 A (+139d) | 2026-03-22 → 2026-09-05 A (+167d) | 0% → 100% | 185d → none |
| A51290 | Backfilling & Compaction | 2026-04-08 → 2026-08-04 A (+118d) | 2026-04-12 → 2026-09-05 A (+146d) | 0% → 100% | 171d → none |
| A51280 | Testing & Inspection | 2026-03-28 → 2026-10-03 (+189d) | 2026-03-29 → 2026-10-04 (+189d) |  | 179d → 57d |
| LR 20 | **LR 20** | 2026-03-04 → 2026-08-04 (+153d) | 2026-04-23 → 2026-10-04 (+164d) |  |  |
| MH-3.42.0 / MH-3.42.1 | **MH-3.42.0 / MH-3.42.1** | 2026-03-04 → 2026-08-04 (+153d) | 2026-03-26 → 2026-10-04 (+192d) |  |  |
| A51300 | Excavation | 2026-03-04 → 2026-08-04 A (+153d) | 2026-03-08 → 2026-09-05 A (+181d) | 0% → 100% | 161d → none |
| A51310 | Pipe Laying | 2026-03-09 → 2026-08-04 A (+148d) | 2026-03-12 → 2026-09-05 A (+177d) | 0% → 100% | 161d → none |
| A51320 | Install Manhole | 2026-03-09 → 2026-08-04 A (+148d) | 2026-03-12 → 2026-09-05 A (+177d) | 0% → 100% | 163d → none |
| A51340 | Backfilling & Compaction | 2026-03-16 → 2026-08-04 A (+141d) | 2026-03-26 → 2026-09-05 A (+163d) | 0% → 100% | 161d → none |
| A51330 | Testing & Inspection | 2026-03-14 → 2026-10-03 (+203d) | 2026-03-15 → 2026-10-04 (+203d) |  | 161d → 57d |
| MH-3.42.1 / MH-3.42.2 | **MH-3.42.1 / MH-3.42.2** | 2026-03-09 → 2026-08-04 (+148d) | 2026-04-07 → 2026-10-04 (+180d) |  |  |
| A51350 | Excavation | 2026-03-09 → 2026-08-04 A (+148d) | 2026-03-12 → 2026-09-05 A (+177d) | 0% → 100% | 163d → none |
| A51360 | Pipe Laying | 2026-03-14 → 2026-08-04 A (+143d) | 2026-03-22 → 2026-09-05 A (+167d) | 0% → 100% | 163d → none |
| A51370 | Install Manhole | 2026-03-14 → 2026-08-04 A (+143d) | 2026-03-17 → 2026-09-05 A (+172d) | 0% → 100% | 169d → none |
| A51390 | Backfilling & Compaction | 2026-03-28 → 2026-08-04 A (+129d) | 2026-04-07 → 2026-09-05 A (+151d) | 0% → 100% | 161d → none |
| A51380 | Testing & Inspection | 2026-03-23 → 2026-10-03 (+194d) | 2026-03-24 → 2026-10-04 (+194d) |  | 163d → 57d |
| MH-3.42.2 / MH-3.42.3 | **MH-3.42.2 / MH-3.42.3** | 2026-03-14 → 2026-08-04 (+143d) | 2026-04-12 → 2026-10-04 (+175d) |  |  |
| A51400 | Excavation | 2026-03-14 → 2026-08-04 A (+143d) | 2026-03-17 → 2026-09-05 A (+172d) | 0% → 100% | 169d → none |
| A51410 | Pipe Laying | 2026-03-18 → 2026-08-04 A (+139d) | 2026-03-26 → 2026-09-05 A (+163d) | 0% → 100% | 169d → none |
| A51420 | Install Manhole | 2026-03-18 → 2026-08-04 A (+139d) | 2026-03-22 → 2026-09-05 A (+167d) | 0% → 100% | 175d → none |
| A51440 | Backfilling & Compaction | 2026-04-08 → 2026-08-04 A (+118d) | 2026-04-12 → 2026-09-05 A (+146d) | 0% → 100% | 161d → none |
| A51430 | Testing & Inspection | 2026-03-28 → 2026-10-03 (+189d) | 2026-03-29 → 2026-10-04 (+189d) |  | 169d → 57d |
| MH-3.42.3 / MH-3.42.4 | **MH-3.42.3 / MH-3.42.4** | 2026-03-18 → 2026-08-04 (+139d) | 2026-04-23 → 2026-10-04 (+164d) |  |  |
| A51450 | Excavation | 2026-03-18 → 2026-08-04 A (+139d) | 2026-03-22 → 2026-09-05 A (+167d) | 0% → 100% | 169d → none |
| A51460 | Pipe Laying | 2026-03-23 → 2026-08-04 A (+134d) | 2026-03-31 → 2026-09-05 A (+158d) | 0% → 100% | 169d → none |
| A51470 | Install Manhole | 2026-03-23 → 2026-08-04 A (+134d) | 2026-03-26 → 2026-09-05 A (+163d) | 0% → 100% | 175d → none |
| A51490 | Backfilling & Compaction | 2026-04-13 → 2026-08-04 A (+113d) | 2026-04-23 → 2026-09-05 A (+135d) | 0% → 100% | 161d → none |
| A51480 | Testing & Inspection | 2026-04-01 → 2026-10-03 (+185d) | 2026-04-02 → 2026-10-04 (+185d) |  | 169d → 57d |
| LR 21 | **LR 21** | 2026-03-04 → 2026-08-04 (+153d) | 2026-04-23 → 2026-11-03 (+194d) |  |  |
| MH-3.33 / MH-3.34 | **MH-3.33 / MH-3.34** | 2026-03-04 → 2026-08-04 (+153d) | 2026-03-26 → 2026-11-03 (+222d) |  |  |
| A51500 | Excavation | 2026-03-04 → 2026-08-04 A (+153d) | 2026-03-08 → 2026-09-05 A (+181d) | 0% → 100% | 161d → none |
| A51510 | Pipe Laying | 2026-03-09 → 2026-08-04 A (+148d) | 2026-03-12 → 2026-09-05 A (+177d) | 0% → 100% | 161d → none |
| A51520 | Install Manhole | 2026-03-09 → 2026-08-04 A (+148d) | 2026-03-12 → 2026-09-05 A (+177d) | 0% → 100% | 163d → none |
| A51540 | Backfilling & Compaction | 2026-03-16 → 2026-08-04 A (+141d) | 2026-03-26 → 2026-09-05 A (+163d) | 0% → 100% | 161d → none |
| A51530 | Testing & Inspection | 2026-03-14 → 2026-11-02 (+233d) | 2026-03-15 → 2026-11-03 (+233d) |  | 161d → 18.44d |
| MH-3.33.0 / MH-3.33.1 | **MH-3.33.0 / MH-3.33.1** | 2026-03-09 → 2026-08-04 (+148d) | 2026-04-07 → 2026-11-03 (+210d) |  |  |
| A51550 | Excavation | 2026-03-09 → 2026-08-04 A (+148d) | 2026-03-12 → 2026-09-05 A (+177d) | 0% → 100% | 163d → none |
| A51560 | Pipe Laying | 2026-03-14 → 2026-08-04 A (+143d) | 2026-03-22 → 2026-09-05 A (+167d) | 0% → 100% | 163d → none |
| A51570 | Install Manhole | 2026-03-14 → 2026-08-04 A (+143d) | 2026-03-17 → 2026-09-05 A (+172d) | 0% → 100% | 169d → none |
| A51590 | Backfilling & Compaction | 2026-03-28 → 2026-08-04 A (+129d) | 2026-04-07 → 2026-09-05 A (+151d) | 0% → 100% | 161d → none |
| A51580 | Testing & Inspection | 2026-03-23 → 2026-11-02 (+224d) | 2026-03-24 → 2026-11-03 (+224d) |  | 163d → 18.44d |
| MH-3.34 / MH-3.35 | **MH-3.34 / MH-3.35** | 2026-03-14 → 2026-08-04 (+143d) | 2026-04-12 → 2026-11-03 (+205d) |  |  |
| A51600 | Excavation | 2026-03-14 → 2026-08-04 A (+143d) | 2026-03-17 → 2026-09-05 A (+172d) | 0% → 100% | 169d → none |

| ID | Task | Start | Finish | Complete | Total float |
| --- | --- | --- | --- | --- | --- |
| A51610 | Pipe Laying | 2026-03-18 → 2026-08-04 A (+139d) | 2026-03-26 → 2026-09-05 A (+163d) | 0% → 100% | 169d → none |
| A51620 | Install Manhole | 2026-03-18 → 2026-08-04 A (+139d) | 2026-03-22 → 2026-09-05 A (+167d) | 0% → 100% | 175d → none |
| A51640 | Backfilling & Compaction | 2026-04-08 → 2026-08-04 A (+118d) | 2026-04-12 → 2026-09-05 A (+146d) | 0% → 100% | 161d → none |
| A51630 | Testing & Inspection | 2026-03-28 → 2026-11-02 (+219d) | 2026-03-29 → 2026-11-03 (+219d) |  | 169d → 18.44d |
| MH-3.35 / MH-3.36 | **MH-3.35 / MH-3.36** | 2026-03-18 → 2026-08-04 (+139d) | 2026-04-23 → 2026-11-03 (+194d) |  |  |
| A51650 | Excavation | 2026-03-18 → 2026-08-04 A (+139d) | 2026-03-22 → 2026-09-05 A (+167d) | 0% → 100% | 169d → none |
| A51660 | Pipe Laying | 2026-03-23 → 2026-08-04 A (+134d) | 2026-03-31 → 2026-09-05 A (+158d) | 0% → 100% | 169d → none |
| A51670 | Install Manhole | 2026-03-23 → 2026-08-04 A (+134d) | 2026-03-26 → 2026-09-05 A (+163d) | 0% → 100% | 175d → none |
| A51690 | Backfilling & Compaction | 2026-04-13 → 2026-08-04 A (+113d) | 2026-04-23 → 2026-09-05 A (+135d) | 0% → 100% | 161d → none |
| A51680 | Testing & Inspection | 2026-04-01 → 2026-11-02 (+215d) | 2026-04-02 → 2026-11-03 (+215d) |  | 169d → 18.44d |
| LR 22 | **LR 22** | 2026-03-09 → 2026-08-04 (+148d) | 2026-05-19 → 2026-10-06 (+140d) |  |  |
| MH-3.31.0 / MH-3.31.1 | **MH-3.31.0 / MH-3.31.1** | 2026-03-09 → 2026-08-04 (+148d) | 2026-03-29 → 2026-10-06 (+191d) |  |  |
| A51700 | Excavation | 2026-03-09 → 2026-08-04 A (+148d) | 2026-03-12 → 2026-09-05 A (+177d) | 0% → 100% | 125d → none |
| A51710 | Pipe Laying | 2026-03-14 → 2026-08-04 A (+143d) | 2026-03-22 → 2026-09-05 A (+167d) | 0% → 100% | 125d → none |
| A51720 | Install Manhole | 2026-03-14 → 2026-08-04 A (+143d) | 2026-03-17 → 2026-09-05 A (+172d) | 0% → 100% | 131d → none |
| A51740 | Backfilling & Compaction | 2026-03-25 → 2026-08-04 A (+132d) | 2026-03-29 → 2026-09-05 A (+160d) | 0% → 100% | 125d → none |
| A51730 | Testing & Inspection | 2026-03-23 → 2026-10-05 (+196d) | 2026-03-24 → 2026-10-06 (+196d) |  | 125d → 20d |
| MH-3.31.1 / MH-3.31.2 | **MH-3.31.1 / MH-3.31.2** | 2026-03-14 → 2026-08-04 (+143d) | 2026-04-02 → 2026-10-06 (+187d) |  |  |
| A51750 | Excavation | 2026-03-14 → 2026-08-04 A (+143d) | 2026-03-17 → 2026-09-05 A (+172d) | 0% → 100% | 125d → none |
| A51760 | Pipe Laying | 2026-03-18 → 2026-08-04 A (+139d) | 2026-03-22 → 2026-09-05 A (+167d) | 0% → 100% | 129d → none |
| A51770 | Install Manhole | 2026-03-18 → 2026-08-04 A (+139d) | 2026-03-22 → 2026-09-05 A (+167d) | 0% → 100% | 131d → none |
| A51790 | Backfilling & Compaction | 2026-03-30 → 2026-08-04 A (+127d) | 2026-04-02 → 2026-09-05 A (+156d) | 0% → 100% | 125d → none |
| A51780 | Testing & Inspection | 2026-03-23 → 2026-10-05 (+196d) | 2026-03-24 → 2026-10-06 (+196d) |  | 129d → 20d |
| MH-3.31.1.0 / MH-3.31.1.1 | **MH-3.31.1.0 / MH-3.31.1.1** | 2026-03-18 → 2026-08-04 (+139d) | 2026-04-14 → 2026-10-06 (+175d) |  |  |
| A51800 | Excavation | 2026-03-18 → 2026-08-04 A (+139d) | 2026-03-22 → 2026-09-05 A (+167d) | 0% → 100% | 125d → none |
| A51810 | Pipe Laying | 2026-03-23 → 2026-08-04 A (+134d) | 2026-03-31 → 2026-09-05 A (+158d) | 0% → 100% | 125d → none |
| A51820 | Install Manhole | 2026-03-23 → 2026-08-04 A (+134d) | 2026-03-26 → 2026-09-05 A (+163d) | 0% → 100% | 131d → none |
| A51840 | Backfilling & Compaction | 2026-04-04 → 2026-08-04 A (+122d) | 2026-04-14 → 2026-09-05 A (+144d) | 0% → 100% | 125d → none |
| A51830 | Testing & Inspection | 2026-04-01 → 2026-10-05 (+187d) | 2026-04-02 → 2026-10-06 (+187d) |  | 125d → 20d |
| MH-3.31.2 / MH-3.31.3 | **MH-3.31.2 / MH-3.31.3** | 2026-03-23 → 2026-08-04 (+134d) | 2026-04-26 → 2026-10-06 (+163d) |  |  |
| A51850 | Excavation | 2026-03-23 → 2026-08-04 A (+134d) | 2026-03-26 → 2026-09-05 A (+163d) | 0% → 100% | 135d → none |
| A51860 | Pipe Laying | 2026-03-28 → 2026-08-04 A (+129d) | 2026-03-31 → 2026-09-05 A (+158d) | 0% → 100% | 135d → none |
| A51870 | Install Manhole | 2026-03-28 → 2026-08-04 A (+129d) | 2026-03-31 → 2026-09-05 A (+158d) | 0% → 100% | 137d → none |
| A51890 | Backfilling & Compaction | 2026-04-15 → 2026-08-04 A (+111d) | 2026-04-26 → 2026-09-05 A (+132d) | 0% → 100% | 125d → none |
| A51880 | Testing & Inspection | 2026-04-01 → 2026-10-05 (+187d) | 2026-04-02 → 2026-10-06 (+187d) |  | 135d → 20d |
| MH-3.31.2.0 / MH-3.31.2.1 | **MH-3.31.2.0 / MH-3.31.2.1** | 2026-03-28 → 2026-08-04 (+129d) | 2026-05-07 → 2026-10-06 (+152d) |  |  |
| A51900 | Excavation | 2026-03-28 → 2026-08-04 A (+129d) | 2026-03-31 → 2026-09-05 A (+158d) | 0% → 100% | 137d → none |
| A51910 | Pipe Laying | 2026-04-01 → 2026-08-04 A (+125d) | 2026-04-09 → 2026-09-05 A (+149d) | 0% → 100% | 137d → none |
| A51920 | Install Manhole | 2026-04-01 → 2026-08-04 A (+125d) | 2026-04-05 → 2026-09-05 A (+153d) | 0% → 100% | 143d → none |
| A51940 | Backfilling & Compaction | 2026-04-27 → 2026-08-04 A (+99d) | 2026-05-07 → 2026-09-05 A (+121d) | 0% → 100% | 125d → none |
| A51930 | Testing & Inspection | 2026-04-11 → 2026-10-05 (+177d) | 2026-04-12 → 2026-10-06 (+177d) |  | 137d → 20d |
| MH-3.31.3 / MH-3.31.4 | **MH-3.31.3 / MH-3.31.4** | 2026-04-01 → 2026-08-04 (+125d) | 2026-05-19 → 2026-10-06 (+140d) |  |  |
| A51950 | Excavation | 2026-04-01 → 2026-08-04 A (+125d) | 2026-04-05 → 2026-09-05 A (+153d) | 0% → 100% | 143d → none |
| A51960 | Pipe Laying | 2026-04-06 → 2026-08-04 A (+120d) | 2026-04-14 → 2026-09-05 A (+144d) | 0% → 100% | 143d → none |
| A51970 | Install Manhole | 2026-04-06 → 2026-08-04 A (+120d) | 2026-04-09 → 2026-09-05 A (+149d) | 0% → 100% | 149d → none |
| A51990 | Backfilling & Compaction | 2026-05-09 → 2026-08-04 A (+87d) | 2026-05-19 → 2026-09-05 A (+109d) | 0% → 100% | 125d → none |
| A51980 | Testing & Inspection | 2026-04-15 → 2026-10-05 (+173d) | 2026-04-16 → 2026-10-06 (+173d) |  | 143d → 20d |
| LR 23 | **LR 23** | 2026-03-09 → 2026-08-04 (+148d) | 2026-05-19 → 2026-10-06 (+140d) |  |  |
| MH-3.28.0 / MH-3.28.1 | **MH-3.28.0 / MH-3.28.1** | 2026-03-09 → 2026-08-04 (+148d) | 2026-03-29 → 2026-10-06 (+191d) |  |  |
| A52000 | Excavation | 2026-03-09 → 2026-08-04 A (+148d) | 2026-03-12 → 2026-09-05 A (+177d) | 0% → 100% | 139d → none |
| A52010 | Pipe Laying | 2026-03-14 → 2026-08-04 A (+143d) | 2026-03-22 → 2026-09-05 A (+167d) | 0% → 100% | 139d → none |
| A52020 | Install Manhole | 2026-03-14 → 2026-08-04 A (+143d) | 2026-03-17 → 2026-09-05 A (+172d) | 0% → 100% | 145d → none |
| A52040 | Backfilling & Compaction | 2026-03-25 → 2026-08-04 A (+132d) | 2026-03-29 → 2026-09-05 A (+160d) | 0% → 100% | 139d → none |
| A52030 | Testing & Inspection | 2026-03-23 → 2026-10-05 (+196d) | 2026-03-24 → 2026-10-06 (+196d) |  | 139d → 34d |
| MH-3.28.1 / MH-3.28.2 | **MH-3.28.1 / MH-3.28.2** | 2026-03-14 → 2026-08-04 (+143d) | 2026-04-02 → 2026-10-06 (+187d) |  |  |
| A52050 | Excavation | 2026-03-14 → 2026-08-04 A (+143d) | 2026-03-17 → 2026-09-05 A (+172d) | 0% → 100% | 139d → none |
| A52060 | Pipe Laying | 2026-03-18 → 2026-08-04 A (+139d) | 2026-03-22 → 2026-09-05 A (+167d) | 0% → 100% | 143d → none |
| A52070 | Install Manhole | 2026-03-18 → 2026-08-04 A (+139d) | 2026-03-22 → 2026-09-05 A (+167d) | 0% → 100% | 145d → none |
| A52090 | Backfilling & Compaction | 2026-03-30 → 2026-08-04 A (+127d) | 2026-04-02 → 2026-09-05 A (+156d) | 0% → 100% | 139d → none |
| A52080 | Testing & Inspection | 2026-03-23 → 2026-10-05 (+196d) | 2026-03-24 → 2026-10-06 (+196d) |  | 143d → 34d |
| MH-3.28.1.0 / MH-3.28.1.1 | **MH-3.28.1.0 / MH-3.28.1.1** | 2026-03-18 → 2026-08-04 (+139d) | 2026-04-14 → 2026-10-06 (+175d) |  |  |
| A52100 | Excavation | 2026-03-18 → 2026-08-04 A (+139d) | 2026-03-22 → 2026-09-05 A (+167d) | 0% → 100% | 139d → none |
| A52110 | Pipe Laying | 2026-03-23 → 2026-08-04 A (+134d) | 2026-03-31 → 2026-09-05 A (+158d) | 0% → 100% | 139d → none |
| A52120 | Install Manhole | 2026-03-23 → 2026-08-04 A (+134d) | 2026-03-26 → 2026-09-05 A (+163d) | 0% → 100% | 145d → none |
| A52140 | Backfilling & Compaction | 2026-04-04 → 2026-08-04 A (+122d) | 2026-04-14 → 2026-09-05 A (+144d) | 0% → 100% | 139d → none |
| A52130 | Testing & Inspection | 2026-04-01 → 2026-10-05 (+187d) | 2026-04-02 → 2026-10-06 (+187d) |  | 139d → 34d |
| MH-3.28.2 / MH-3.28.3 | **MH-3.28.2 / MH-3.28.3** | 2026-03-23 → 2026-08-04 (+134d) | 2026-04-26 → 2026-10-06 (+163d) |  |  |
| A52150 | Excavation | 2026-03-23 → 2026-08-04 A (+134d) | 2026-03-26 → 2026-09-05 A (+163d) | 0% → 100% | 149d → none |
| A52160 | Pipe Laying | 2026-03-28 → 2026-08-04 A (+129d) | 2026-03-31 → 2026-09-05 A (+158d) | 0% → 100% | 149d → none |
| A52170 | Install Manhole | 2026-03-28 → 2026-08-04 A (+129d) | 2026-03-31 → 2026-09-05 A (+158d) | 0% → 100% | 151d → none |

| ID | Task | Start | Finish | Complete | Total float |
| --- | --- | --- | --- | --- | --- |
| A52190 | Backfilling & Compaction | 2026-04-15 → 2026-08-04 A (+111d) | 2026-04-26 → 2026-09-05 A (+132d) | 0% → 100% | 139d → none |
| A52180 | Testing & Inspection | 2026-04-01 → 2026-10-05 (+187d) | 2026-04-02 → 2026-10-06 (+187d) |  | 149d → 34d |
| MH-3.28.2.0 / MH-3.28.2.1 | **MH-3.28.2.0 / MH-3.28.2.1** | 2026-03-28 → 2026-08-04 (+129d) | 2026-05-07 → 2026-10-06 (+152d) |  |  |
| A52200 | Excavation | 2026-03-28 → 2026-08-04 A (+129d) | 2026-03-31 → 2026-09-05 A (+158d) | 0% → 100% | 151d → none |
| A52210 | Pipe Laying | 2026-04-01 → 2026-08-04 A (+125d) | 2026-04-09 → 2026-09-05 A (+149d) | 0% → 100% | 151d → none |
| A52220 | Install Manhole | 2026-04-01 → 2026-08-04 A (+125d) | 2026-04-05 → 2026-09-05 A (+153d) | 0% → 100% | 157d → none |
| A52240 | Backfilling & Compaction | 2026-04-27 → 2026-08-04 A (+99d) | 2026-05-07 → 2026-09-05 A (+121d) | 0% → 100% | 139d → none |
| A52230 | Testing & Inspection | 2026-04-11 → 2026-10-05 (+177d) | 2026-04-12 → 2026-10-06 (+177d) |  | 151d → 34d |
| MH-3.28.3 / MH-3.28.4 | **MH-3.28.3 / MH-3.28.4** | 2026-04-01 → 2026-08-04 (+125d) | 2026-05-19 → 2026-10-06 (+140d) |  |  |
| A52250 | Excavation | 2026-04-01 → 2026-08-04 A (+125d) | 2026-04-05 → 2026-09-05 A (+153d) | 0% → 100% | 157d → none |
| A52260 | Pipe Laying | 2026-04-06 → 2026-08-04 A (+120d) | 2026-04-14 → 2026-09-05 A (+144d) | 0% → 100% | 157d → none |
| A52270 | Install Manhole | 2026-04-06 → 2026-08-04 A (+120d) | 2026-04-09 → 2026-09-05 A (+149d) | 0% → 100% | 163d → none |
| A52290 | Backfilling & Compaction | 2026-05-09 → 2026-08-04 A (+87d) | 2026-05-19 → 2026-09-05 A (+109d) | 0% → 100% | 139d → none |
| A52280 | Testing & Inspection | 2026-04-15 → 2026-10-05 (+173d) | 2026-04-16 → 2026-10-06 (+173d) |  | 157d → 34d |
| LR 24 | **LR 24** | 2026-03-17 → 2026-08-04 (+140d) | 2026-06-27 → 2026-10-06 (+101d) |  |  |
| MH-3.13.7 / MH-3.13.8 | **MH-3.13.7 / MH-3.13.8** | 2026-03-17 → 2026-08-04 (+140d) | 2026-04-13 → 2026-10-06 (+176d) |  |  |
| A52300 | Excavation | 2026-03-17 → 2026-08-04 A (+140d) | 2026-03-21 → 2026-09-05 A (+168d) | 0% → 100% | 106d → none |
| A52310 | Pipe Laying | 2026-03-22 → 2026-08-04 A (+135d) | 2026-03-30 → 2026-09-05 A (+159d) | 0% → 100% | 106d → none |
| A52320 | Install Manhole | 2026-03-22 → 2026-08-04 A (+135d) | 2026-03-25 → 2026-09-05 A (+164d) | 0% → 100% | 112d → none |
| A52340 | Backfilling & Compaction | 2026-04-02 → 2026-08-04 A (+124d) | 2026-04-13 → 2026-09-05 A (+145d) | 0% → 100% | 106d → none |
| A52330 | Testing & Inspection | 2026-03-31 → 2026-10-05 (+188d) | 2026-04-01 → 2026-10-06 (+188d) |  | 106d → 29d |
| MH-3.23 / MH-3.24 | **MH-3.23 / MH-3.24** | 2026-03-22 → 2026-08-04 (+135d) | 2026-04-18 → 2026-10-06 (+171d) |  |  |
| A52350 | Excavation | 2026-03-22 → 2026-08-04 A (+135d) | 2026-03-25 → 2026-09-05 A (+164d) | 0% → 100% | 112d → none |
| A52360 | Pipe Laying | 2026-03-26 → 2026-08-04 A (+131d) | 2026-03-30 → 2026-09-05 A (+159d) | 0% → 100% | 116d → none |
| A52370 | Install Manhole | 2026-03-26 → 2026-08-04 A (+131d) | 2026-03-30 → 2026-09-05 A (+159d) | 0% → 100% | 118d → none |
| A52390 | Backfilling & Compaction | 2026-04-14 → 2026-08-04 A (+112d) | 2026-04-18 → 2026-09-05 A (+140d) | 0% → 100% | 106d → none |
| A52380 | Testing & Inspection | 2026-03-31 → 2026-10-05 (+188d) | 2026-04-01 → 2026-10-06 (+188d) |  | 116d → 29d |
| MH-3.23.0 / MH-3.23.1 | **MH-3.23.0 / MH-3.23.1** | 2026-04-14 → 2026-08-15 (+123d) | 2026-06-15 → 2026-10-06 (+113d) |  |  |
| A52600 | Excavation | 2026-04-14 → 2026-08-15 A (+123d) | 2026-04-18 → 2026-09-20 A (+155d) | 0% → 100% | 136d → none |
| A52610 | Pipe Laying | 2026-04-19 → 2026-08-15 A (+118d) | 2026-04-27 → 2026-09-20 A (+146d) | 0% → 100% | 136d → none |
| A52620 | Install Manhole | 2026-04-19 → 2026-08-15 A (+118d) | 2026-04-22 → 2026-09-20 A (+151d) | 0% → 100% | 142d → none |
| A52640 | Backfilling & Compaction | 2026-06-04 → 2026-08-15 A (+72d) | 2026-06-15 → 2026-09-20 A (+97d) | 0% → 100% | 106d → none |
| A52630 | Testing & Inspection | 2026-04-28 → 2026-10-05 (+160d) | 2026-04-29 → 2026-10-06 (+160d) |  | 136d → 29d |
| MH-3.23.0 / MH-3.23.1A | **MH-3.23.0 / MH-3.23.1A** | 2026-04-09 → 2026-08-04 (+117d) | 2026-06-03 → 2026-10-06 (+125d) |  |  |
| A52550 | Excavation | 2026-04-09 → 2026-08-04 A (+117d) | 2026-04-13 → 2026-09-05 A (+145d) | 0% → 100% | 130d → none |
| A52560 | Pipe Laying | 2026-04-14 → 2026-08-04 A (+112d) | 2026-04-22 → 2026-09-05 A (+136d) | 0% → 100% | 130d → none |
| A52570 | Install Manhole | 2026-04-14 → 2026-08-04 A (+112d) | 2026-04-18 → 2026-09-05 A (+140d) | 0% → 100% | 136d → none |
| A52590 | Backfilling & Compaction | 2026-05-24 → 2026-08-15 A (+83d) | 2026-06-03 → 2026-09-20 A (+109d) | 0% → 100% | 106d → none |
| A52580 | Testing & Inspection | 2026-04-23 → 2026-10-05 (+165d) | 2026-04-25 → 2026-10-06 (+164d) |  | 130d → 29d |
| MH-3.23.1 / MH-3.23.2 | **MH-3.23.1 / MH-3.23.2** | 2026-04-19 → 2026-08-15 (+118d) | 2026-06-27 → 2026-10-06 (+101d) |  |  |
| A52650 | Excavation | 2026-04-19 → 2026-08-15 A (+118d) | 2026-04-22 → 2026-09-20 A (+151d) | 0% → 100% | 142d → none |
| A52660 | Pipe Laying | 2026-04-23 → 2026-08-15 A (+114d) | 2026-05-02 → 2026-09-20 A (+141d) | 0% → 100% | 142d → none |
| A52670 | Install Manhole | 2026-04-23 → 2026-08-15 A (+114d) | 2026-04-27 → 2026-09-20 A (+146d) | 0% → 100% | 148d → none |
| A52690 | Backfilling & Compaction | 2026-06-16 → 2026-08-15 A (+60d) | 2026-06-27 → 2026-09-20 A (+85d) | 0% → 100% | 106d → none |
| A52680 | Testing & Inspection | 2026-05-03 → 2026-10-05 (+155d) | 2026-05-04 → 2026-10-06 (+155d) |  | 142d → 29d |
| MH-3.24 / MH-3.25 | **MH-3.24 / MH-3.25** | 2026-03-26 → 2026-08-04 (+131d) | 2026-04-29 → 2026-10-06 (+160d) |  |  |
| A52400 | Excavation | 2026-03-26 → 2026-08-04 A (+131d) | 2026-03-30 → 2026-09-05 A (+159d) | 0% → 100% | 112d → none |
| A52410 | Pipe Laying | 2026-03-31 → 2026-08-04 A (+126d) | 2026-04-08 → 2026-09-05 A (+150d) | 0% → 100% | 112d → none |
| A52420 | Install Manhole | 2026-03-31 → 2026-08-04 A (+126d) | 2026-04-04 → 2026-09-05 A (+154d) | 0% → 100% | 118d → none |
| A52440 | Backfilling & Compaction | 2026-04-19 → 2026-08-04 A (+107d) | 2026-04-29 → 2026-09-05 A (+129d) | 0% → 100% | 106d → none |
| A52430 | Testing & Inspection | 2026-04-09 → 2026-10-05 (+179d) | 2026-04-11 → 2026-10-06 (+178d) |  | 112d → 29d |
| MH-3.24.0 / MH-3.24.1 | **MH-3.24.0 / MH-3.24.1** | 2026-03-31 → 2026-08-04 (+126d) | 2026-05-11 → 2026-10-06 (+148d) |  |  |
| A52450 | Excavation | 2026-03-31 → 2026-08-04 A (+126d) | 2026-04-04 → 2026-09-05 A (+154d) | 0% → 100% | 118d → none |
| A52460 | Pipe Laying | 2026-04-05 → 2026-08-04 A (+121d) | 2026-04-13 → 2026-09-05 A (+145d) | 0% → 100% | 118d → none |
| A52470 | Install Manhole | 2026-04-05 → 2026-08-04 A (+121d) | 2026-04-08 → 2026-09-05 A (+150d) | 0% → 100% | 124d → none |
| A52490 | Backfilling & Compaction | 2026-04-30 → 2026-08-04 A (+96d) | 2026-05-11 → 2026-09-05 A (+117d) | 0% → 100% | 106d → none |
| A52480 | Testing & Inspection | 2026-04-14 → 2026-10-05 (+174d) | 2026-04-15 → 2026-10-06 (+174d) |  | 118d → 29d |
| MH-3.25 / MH-3.26 | **MH-3.25 / MH-3.26** | 2026-04-05 → 2026-08-15 (+132d) | 2026-05-23 → 2026-10-06 (+136d) |  |  |
| A52500 | Excavation | 2026-04-05 → 2026-08-15 A (+132d) | 2026-04-08 → 2026-09-20 A (+165d) | 0% → 100% | 124d → none |
| A52510 | Pipe Laying | 2026-04-09 → 2026-08-15 A (+128d) | 2026-04-18 → 2026-09-20 A (+155d) | 0% → 100% | 124d → none |
| A52520 | Install Manhole | 2026-04-09 → 2026-08-15 A (+128d) | 2026-04-13 → 2026-09-20 A (+160d) | 0% → 100% | 130d → none |
| A52540 | Backfilling & Compaction | 2026-05-12 → 2026-08-15 A (+95d) | 2026-05-23 → 2026-09-20 A (+120d) | 0% → 100% | 106d → none |
| A52530 | Testing & Inspection | 2026-04-19 → 2026-10-05 (+169d) | 2026-04-20 → 2026-10-06 (+169d) |  | 124d → 29d |
| LR 25 | **LR 25** | 2026-03-10 → 2026-08-15 (+158d) | 2026-06-08 → 2026-10-06 (+120d) |  |  |
| MH-3.26 / MH-3.27 | **MH-3.26 / MH-3.27** | 2026-03-10 → 2026-08-15 (+158d) | 2026-03-25 → 2026-10-06 (+195d) |  |  |
| A52700 | Excavation | 2026-03-10 → 2026-08-15 A (+158d) | 2026-03-14 → 2026-09-20 A (+190d) | 0% → 100% | 0d → none |
| A52710 | Pipe Laying | 2026-03-15 → 2026-08-15 A (+153d) | 2026-03-18 → 2026-09-20 A (+186d) | 0% → 100% | 4d → none |
| A52720 | Install Manhole | 2026-03-15 → 2026-08-15 A (+153d) | 2026-03-18 → 2026-09-20 A (+186d) | 0% → 100% | 6d → none |
| A52740 | Backfilling & Compaction | 2026-03-22 → 2026-08-15 A (+146d) | 2026-03-25 → 2026-09-20 A (+179d) | 0% → 100% | 4d → none |
| A52730 | Testing & Inspection | 2026-03-19 → 2026-10-05 (+200d) | 2026-03-21 → 2026-10-06 (+199d) |  | 4d → 41.88d |

| ID | Task | Start | Finish | Complete | Total float | Predecessors |
| --- | --- | --- | --- | --- | --- | --- |
| MH-3.27 / MH-3.28 | **MH-3.27 / MH-3.28** | 2026-03-15 → 2026-08-15 (+153d) | 2026-04-11 → 2026-10-06 (+178d) |  |  |  |
| A52750 | Excavation | 2026-03-15 → 2026-08-15 A (+153d) | 2026-03-18 → 2026-09-20 A (+186d) | 0% → 100% | 0d → none |  |
| A52760 | Pipe Laying | 2026-03-19 → 2026-08-15 A (+149d) | 2026-03-28 → 2026-09-20 A (+176d) | 0% → 100% | 0d → none |  |
| A52770 | Install Manhole | 2026-03-19 → 2026-08-15 A (+149d) | 2026-03-23 → 2026-09-20 A (+181d) | 0% → 100% | 6d → none |  |
| A52790 | Backfilling & Compaction | 2026-03-31 → 2026-08-15 A (+137d) | 2026-04-11 → 2026-09-20 A (+162d) | 0% → 100% | 0d → none |  |
| A52780 | Testing & Inspection | 2026-03-29 → 2026-10-05 (+190d) | 2026-03-30 → 2026-10-06 (+190d) |  | 0d → 41.88d |  |
| MH-3.28 / MH-3.29 | **MH-3.28 / MH-3.29** | 2026-03-19 → 2026-08-15 (+149d) | 2026-04-22 → 2026-10-06 (+167d) |  |  |  |
| A52800 | Excavation | 2026-03-19 → 2026-08-15 A (+149d) | 2026-03-23 → 2026-09-20 A (+181d) | 0% → 100% | 6d → none |  |
| A52810 | Pipe Laying | 2026-03-24 → 2026-08-15 A (+144d) | 2026-04-01 → 2026-09-20 A (+172d) | 0% → 100% | 6d → none |  |
| A52820 | Install Manhole | 2026-03-24 → 2026-08-15 A (+144d) | 2026-03-28 → 2026-09-20 A (+176d) | 0% → 100% | 12d → none |  |
| A52840 | Backfilling & Compaction | 2026-04-12 → 2026-08-15 A (+125d) | 2026-04-22 → 2026-09-20 A (+151d) | 0% → 100% | 0d → none |  |
| A52830 | Testing & Inspection | 2026-04-02 → 2026-10-05 (+186d) | 2026-04-04 → 2026-10-06 (+185d) |  | 6d → 41.88d |  |
| MH-3.29 / MH-3.30 | **MH-3.29 / MH-3.30** | 2026-03-24 → 2026-08-15 (+144d) | 2026-05-04 → 2026-10-06 (+155d) |  |  |  |
| A52850 | Excavation | 2026-03-24 → 2026-08-15 A (+144d) | 2026-03-28 → 2026-09-20 A (+176d) | 0% → 100% | 12d → none |  |
| A52860 | Pipe Laying | 2026-03-29 → 2026-08-15 A (+139d) | 2026-04-06 → 2026-09-20 A (+167d) | 0% → 100% | 12d → none |  |
| A52870 | Install Manhole | 2026-03-29 → 2026-08-15 A (+139d) | 2026-04-01 → 2026-09-20 A (+172d) | 0% → 100% | 18d → none |  |
| A52890 | Backfilling & Compaction | 2026-04-23 → 2026-08-15 A (+114d) | 2026-05-04 → 2026-09-20 A (+139d) | 0% → 100% | 0d → none |  |
| A52880 | Testing & Inspection | 2026-04-07 → 2026-10-05 (+181d) | 2026-04-08 → 2026-10-06 (+181d) |  | 12d → 41.88d |  |
| MH-3.30 / MH-3.31 | **MH-3.30 / MH-3.31** | 2026-03-29 → 2026-08-15 (+139d) | 2026-05-16 → 2026-10-06 (+143d) |  |  |  |
| A52900 | Excavation | 2026-03-29 → 2026-08-15 A (+139d) | 2026-04-01 → 2026-09-20 A (+172d) | 0% → 100% | 18d → none |  |
| A52910 | Pipe Laying | 2026-04-02 → 2026-08-15 A (+135d) | 2026-04-11 → 2026-09-20 A (+162d) | 0% → 100% | 18d → none |  |
| A52920 | Install Manhole | 2026-04-02 → 2026-08-15 A (+135d) | 2026-04-06 → 2026-09-20 A (+167d) | 0% → 100% | 24d → none |  |
| A52940 | Backfilling & Compaction | 2026-05-05 → 2026-08-15 A (+102d) | 2026-05-16 → 2026-09-20 A (+127d) | 0% → 100% | 0d → none |  |
| A52930 | Testing & Inspection | 2026-04-12 → 2026-10-05 (+176d) | 2026-04-13 → 2026-10-06 (+176d) |  | 18d → 41.88d |  |
| MH-3.31 / MH-3.32 | **MH-3.31 / MH-3.32** | 2026-04-02 → 2026-08-15 (+135d) | 2026-05-27 → 2026-10-06 (+132d) |  |  |  |
| A52950 | Excavation | 2026-04-02 → 2026-08-15 A (+135d) | 2026-04-06 → 2026-09-20 A (+167d) | 0% → 100% | 24d → none |  |
| A52960 | Pipe Laying | 2026-04-07 → 2026-08-15 A (+130d) | 2026-04-15 → 2026-09-20 A (+158d) | 0% → 100% | 24d → none |  |
| A52970 | Install Manhole | 2026-04-07 → 2026-08-15 A (+130d) | 2026-04-11 → 2026-09-20 A (+162d) | 0% → 100% | 30d → none |  |
| A52990 | Backfilling & Compaction | 2026-05-17 → 2026-08-15 A (+90d) | 2026-05-27 → 2026-09-20 A (+116d) | 0% → 100% | 0d → none |  |
| A52980 | Testing & Inspection | 2026-04-16 → 2026-10-05 (+172d) | 2026-04-18 → 2026-10-06 (+171d) |  | 24d → 41.88d |  |
| MH-3.32 / MH-3.33 | **MH-3.32 / MH-3.33** | 2026-04-07 → 2026-08-15 (+130d) | 2026-06-08 → 2026-10-06 (+120d) |  |  |  |
| A53000 | Excavation | 2026-04-07 → 2026-08-15 A (+130d) | 2026-04-11 → 2026-09-20 A (+162d) | 0% → 100% | 30d → none |  |
| A53010 | Pipe Laying | 2026-04-12 → 2026-08-15 A (+125d) | 2026-04-20 → 2026-09-20 A (+153d) | 0% → 100% | 30d → none |  |
| A53020 | Install Manhole | 2026-04-12 → 2026-08-15 A (+125d) | 2026-04-15 → 2026-09-20 A (+158d) | 0% → 100% | 36d → none |  |
| A53040 | Backfilling & Compaction | 2026-05-28 → 2026-08-15 A (+79d) | 2026-06-08 → 2026-09-20 A (+104d) | 0% → 100% | 0d → none |  |
| A53030 | Testing & Inspection | 2026-04-21 → 2026-10-05 (+167d) | 2026-04-22 → 2026-10-06 (+167d) |  | 30d → 41.88d |  |
| LR 26 | **LR 26** | 2026-06-09 → 2026-08-15 (+67d) | 2027-01-19 → 2026-12-22 (-28d) |  |  |  |
| MH-3.12 / MH-3.13 | **MH-3.12 / MH-3.13** | 2026-06-09 → 2026-08-15 (+67d) | 2026-06-29 → 2026-10-07 (+100d) |  |  |  |
| A53050 | Excavation | 2026-06-09 → 2026-08-15 A (+67d) | 2026-06-13 → 2026-09-20 A (+99d) | 0% → 100% | 0d → none | A75870, A1990, A53040 → A75870, A1990 |
| A53060 | Pipe Laying | 2026-06-14 → 2026-08-15 A (+62d) | 2026-06-22 → 2026-09-20 A (+90d) | 0% → 100% | 0d → none |  |
| A53070 | Install Manhole | 2026-06-14 → 2026-08-15 A (+62d) | 2026-06-17 → 2026-09-20 A (+95d) | 0% → 100% | 6d → none |  |
| A53090 | Backfilling & Compaction | 2026-06-25 → 2026-08-15 A (+51d) | 2026-06-29 → 2026-09-20 A (+83d) | 0% → 100% | 0d → none |  |
| A53080 | Testing & Inspection | 2026-06-23 → 2026-10-05 (+104d) | 2026-06-24 → 2026-10-07 (+105d) |  | 0d → 18.15d |  |
| MH-3.13 / MH-3.14 | **MH-3.13 / MH-3.14** | 2026-06-14 → 2026-08-15 (+62d) | 2026-07-04 → 2026-10-07 (+95d) |  |  |  |
| A53100 | Excavation | 2026-06-14 → 2026-08-15 A (+62d) | 2026-06-17 → 2026-09-20 A (+95d) | 0% → 100% | 0d → none |  |
| A53110 | Pipe Laying | 2026-06-18 → 2026-08-15 A (+58d) | 2026-06-27 → 2026-09-20 A (+85d) | 0% → 100% | 0d → none |  |
| A53120 | Install Manhole | 2026-06-18 → 2026-08-15 A (+58d) | 2026-06-22 → 2026-09-20 A (+90d) | 0% → 100% | 6d → none |  |
| A53140 | Backfilling & Compaction | 2026-06-30 → 2026-08-15 A (+46d) | 2026-07-04 → 2026-09-20 A (+78d) | 0% → 100% | 0d → none |  |
| A53130 | Testing & Inspection | 2026-06-28 → 2026-10-05 (+99d) | 2026-06-29 → 2026-10-07 (+100d) |  | 0d → 18.15d |  |
| MH-3.13.0 / MH-3.13.1 | **MH-3.13.0 / MH-3.13.1** | 2026-06-18 → 2026-08-15 (+58d) | 2026-07-08 → 2026-10-07 (+91d) |  |  |  |
| A53150 | Excavation | 2026-06-18 → 2026-08-15 A (+58d) | 2026-06-22 → 2026-09-20 A (+90d) | 0% → 100% | 0d → none |  |
| A53160 | Pipe Laying | 2026-06-23 → 2026-08-15 A (+53d) | 2026-07-01 → 2026-09-20 A (+81d) | 0% → 100% | 0d → none |  |
| A53170 | Install Manhole | 2026-06-23 → 2026-08-15 A (+53d) | 2026-06-27 → 2026-09-20 A (+85d) | 0% → 100% | 6d → none |  |
| A53190 | Backfilling & Compaction | 2026-07-05 → 2026-08-15 A (+41d) | 2026-07-08 → 2026-09-20 A (+74d) | 0% → 100% | 0d → none |  |
| A53180 | Testing & Inspection | 2026-07-02 → 2026-10-05 (+95d) | 2026-07-04 → 2026-10-07 (+95d) |  | 0d → 18.15d |  |
| MH-3.13.1 / MH-3.13.1.1 | **MH-3.13.1 / MH-3.13.1.1** | 2026-07-02 → 2026-08-15 (+44d) | 2026-07-22 → 2026-10-07 (+77d) |  |  |  |
| A53300 | Excavation | 2026-07-02 → 2026-08-15 A (+44d) | 2026-07-06 → 2026-09-20 A (+76d) | 0% → 100% | 0d → none |  |
| A53310 | Pipe Laying | 2026-07-07 → 2026-08-15 A (+39d) | 2026-07-15 → 2026-09-20 A (+67d) | 0% → 100% | 0d → none |  |
| A53320 | Install Manhole | 2026-07-07 → 2026-08-15 A (+39d) | 2026-07-11 → 2026-09-20 A (+71d) | 0% → 100% | 6d → none |  |
| A53340 | Backfilling & Compaction | 2026-07-19 → 2026-08-15 A (+27d) | 2026-07-22 → 2026-09-20 A (+60d) | 0% → 100% | 0d → none |  |
| A53330 | Testing & Inspection | 2026-07-16 → 2026-10-05 (+81d) | 2026-07-18 → 2026-10-07 (+81d) |  | 0d → 18.15d |  |
| MH-3.13.1 / MH-3.13.1A | **MH-3.13.1 / MH-3.13.1A** | 2026-06-23 → 2026-08-15 (+53d) | 2026-07-13 → 2026-10-07 (+86d) |  |  |  |
| A53200 | Excavation | 2026-06-23 → 2026-08-15 A (+53d) | 2026-06-27 → 2026-09-20 A (+85d) | 0% → 100% | 0d → none |  |
| A53210 | Pipe Laying | 2026-06-28 → 2026-08-15 A (+48d) | 2026-07-06 → 2026-09-20 A (+76d) | 0% → 100% | 0d → none |  |
| A53220 | Install Manhole | 2026-06-28 → 2026-08-15 A (+48d) | 2026-07-01 → 2026-09-20 A (+81d) | 0% → 100% | 6d → none |  |
| A53240 | Backfilling & Compaction | 2026-07-09 → 2026-08-15 A (+37d) | 2026-07-13 → 2026-09-20 A (+69d) | 0% → 100% | 0d → none |  |
| A53230 | Testing & Inspection | 2026-07-07 → 2026-10-05 (+90d) | 2026-07-08 → 2026-10-07 (+91d) |  | 0d → 18.15d |  |
| MH-3.13.1 / MH-3.13.2 | **MH-3.13.1 / MH-3.13.2** | 2026-06-28 → 2026-08-15 (+48d) | 2026-07-18 → 2026-10-07 (+81d) |  |  |  |
| A53250 | Excavation | 2026-06-28 → 2026-08-15 A (+48d) | 2026-07-01 → 2026-09-20 A (+81d) | 0% → 100% | 0d → none |  |
| A53260 | Pipe Laying | 2026-07-02 → 2026-08-15 A (+44d) | 2026-07-11 → 2026-09-20 A (+71d) | 0% → 100% | 0d → none |  |

| ID | Task | Start | Finish | Complete | Total float |
| --- | --- | --- | --- | --- | --- |
| A53270 | Install Manhole | 2026-07-02 → 2026-08-15 A (+44d) | 2026-07-06 → 2026-09-20 A (+76d) | 0% → 100% | 6d → none |
| A53290 | Backfilling & Compaction | 2026-07-14 → 2026-08-15 A (+32d) | 2026-07-18 → 2026-09-20 A (+64d) | 0% → 100% | 0d → none |
| A53280 | Testing & Inspection | 2026-07-12 → 2026-10-05 (+85d) | 2026-07-13 → 2026-10-07 (+86d) |  | 0d → 18.15d |
| MH-3.13.1.0 / MH-3.13.1.1 | **MH-3.13.1.0 / MH-3.13.1.1** | 2026-07-07 → 2026-08-15 (+39d) | 2026-07-27 → 2026-10-07 (+72d) |  |  |
| A53350 | Excavation | 2026-07-07 → 2026-08-15 A (+39d) | 2026-07-11 → 2026-09-20 A (+71d) | 0% → 100% | 0d → none |
| A53360 | Pipe Laying | 2026-07-12 → 2026-08-15 A (+34d) | 2026-07-20 → 2026-09-20 A (+62d) | 0% → 100% | 0d → none |
| A53370 | Install Manhole | 2026-07-12 → 2026-08-15 A (+34d) | 2026-07-15 → 2026-09-20 A (+67d) | 0% → 100% | 6d → none |
| A53390 | Backfilling & Compaction | 2026-07-23 → 2026-08-15 A (+23d) | 2026-07-27 → 2026-09-20 A (+55d) | 0% → 100% | 0d → none |
| A53380 | Testing & Inspection | 2026-07-21 → 2026-10-05 (+76d) | 2026-07-22 → 2026-10-07 (+77d) |  | 0d → 18.15d |
| MH-3.13.2 / MH-3.13.3 | **MH-3.13.2 / MH-3.13.3** | 2026-07-12 → 2026-08-15 (+34d) | 2026-08-01 → 2026-10-07 (+67d) |  |  |
| A53400 | Excavation | 2026-07-12 → 2026-08-15 A (+34d) | 2026-07-15 → 2026-09-20 A (+67d) | 0% → 100% | 0d → none |
| A53410 | Pipe Laying | 2026-07-16 → 2026-08-15 A (+30d) | 2026-07-25 → 2026-09-20 A (+57d) | 0% → 100% | 0d → none |
| A53420 | Install Manhole | 2026-07-16 → 2026-08-15 A (+30d) | 2026-07-20 → 2026-09-20 A (+62d) | 0% → 100% | 6d → none |
| A53440 | Backfilling & Compaction | 2026-07-28 → 2026-08-15 A (+18d) | 2026-08-01 → 2026-09-20 A (+50d) | 0% → 100% | 0d → none |
| A53430 | Testing & Inspection | 2026-07-26 → 2026-10-05 (+71d) | 2026-07-27 → 2026-10-07 (+72d) |  | 0d → 18.15d |
| MH-3.13.2.0 / MH-3.13.2.1 | **MH-3.13.2.0 / MH-3.13.2.1** | 2026-07-16 → 2026-08-15 (+30d) | 2026-08-05 → 2026-10-07 (+63d) |  |  |
| A53450 | Excavation | 2026-07-16 → 2026-08-15 A (+30d) | 2026-07-20 → 2026-09-20 A (+62d) | 0% → 100% | 0d → none |
| A53460 | Pipe Laying | 2026-07-21 → 2026-08-15 A (+25d) | 2026-07-29 → 2026-09-20 A (+53d) | 0% → 100% | 0d → none |
| A53470 | Install Manhole | 2026-07-21 → 2026-08-15 A (+25d) | 2026-07-25 → 2026-09-20 A (+57d) | 0% → 100% | 6d → none |
| A53490 | Backfilling & Compaction | 2026-08-02 → 2026-08-15 A (+13d) | 2026-08-05 → 2026-09-20 A (+46d) | 0% → 100% | 0d → none |
| A53480 | Testing & Inspection | 2026-07-30 → 2026-10-05 (+67d) | 2026-08-01 → 2026-10-07 (+67d) |  | 0d → 18.15d |
| MH-3.13.3 / MH-3.13.4 | **MH-3.13.3 / MH-3.13.4** | 2026-07-21 → 2026-08-15 (+25d) | 2026-08-10 → 2026-10-07 (+58d) |  |  |
| A53500 | Excavation | 2026-07-21 → 2026-08-15 A (+25d) | 2026-07-25 → 2026-09-20 A (+57d) | 0% → 100% | 0d → none |
| A53510 | Pipe Laying | 2026-07-26 → 2026-08-15 A (+20d) | 2026-08-03 → 2026-09-20 A (+48d) | 0% → 100% | 0d → none |
| A53520 | Install Manhole | 2026-07-26 → 2026-08-15 A (+20d) | 2026-07-29 → 2026-09-20 A (+53d) | 0% → 100% | 6d → none |
| A53540 | Backfilling & Compaction | 2026-08-06 → 2026-08-15 A (+9d) | 2026-08-10 → 2026-09-20 A (+41d) | 0% → 100% | 0d → none |
| A53530 | Testing & Inspection | 2026-08-04 → 2026-10-05 (+62d) | 2026-08-05 → 2026-10-07 (+63d) |  | 0d → 18.15d |
| MH-3.13.3.0 / MH-3.13.3.1 | **MH-3.13.3.0 / MH-3.13.3.1** | 2026-07-26 → 2026-08-15 (+20d) | 2026-08-15 → 2026-10-07 (+53d) |  |  |
| A53550 | Excavation | 2026-07-26 → 2026-08-15 A (+20d) | 2026-07-29 → 2026-09-20 A (+53d) | 0% → 100% | 0d → none |
| A53560 | Pipe Laying | 2026-07-30 → 2026-08-15 A (+16d) | 2026-08-08 → 2026-09-20 A (+43d) | 0% → 100% | 0d → none |
| A53570 | Install Manhole | 2026-07-30 → 2026-08-15 A (+16d) | 2026-08-03 → 2026-09-20 A (+48d) | 0% → 100% | 6d → none |
| A53590 | Backfilling & Compaction | 2026-08-11 → 2026-08-15 A (+4d) | 2026-08-15 → 2026-09-20 A (+36d) | 0% → 100% | 0d → none |
| A53580 | Testing & Inspection | 2026-08-09 → 2026-10-05 (+57d) | 2026-08-10 → 2026-10-07 (+58d) |  | 0d → 18.15d |
| MH-3.13.4 / MH-3.13.5 | **MH-3.13.4 / MH-3.13.5** | 2026-07-30 → 2026-08-15 (+16d) | 2026-08-19 → 2026-10-07 (+49d) |  |  |
| A53600 | Excavation | 2026-07-30 → 2026-08-15 A (+16d) | 2026-08-03 → 2026-09-20 A (+48d) | 0% → 100% | 0d → none |
| A53610 | Pipe Laying | 2026-08-04 → 2026-08-15 A (+11d) | 2026-08-12 → 2026-09-20 A (+39d) | 0% → 100% | 0d → none |
| A53620 | Install Manhole | 2026-08-04 → 2026-08-15 A (+11d) | 2026-08-08 → 2026-09-20 A (+43d) | 0% → 100% | 6d → none |
| A53640 | Backfilling & Compaction | 2026-08-16 → 2026-08-15 A (-1d) | 2026-08-19 → 2026-09-20 A (+32d) | 0% → 100% | 0d → none |
| A53630 | Testing & Inspection | 2026-08-13 → 2026-10-05 (+53d) | 2026-08-15 → 2026-10-07 (+53d) |  | 0d → 18.15d |
| MH-3.13.4.0 / MH-3.13.4.1 | **MH-3.13.4.0 / MH-3.13.4.1** | 2026-08-04 → 2026-10-05 (+62d) | 2026-08-24 → 2026-10-26 (+63d) |  |  |
| A53650 | Excavation | 2026-08-04 → 2026-10-05 (+62d) | 2026-08-08 → 2026-10-10 (+63d) |  | 0d → 6.15d |
| A53660 | Pipe Laying | 2026-08-09 → 2026-10-10 (+62d) | 2026-08-17 → 2026-10-19 (+63d) |  | 0d → 6.15d |
| A53670 | Install Manhole | 2026-08-09 → 2026-10-10 (+62d) | 2026-08-12 → 2026-10-14 (+63d) |  | 6d → 12.15d |
| A53680 | Testing & Inspection | 2026-08-18 → 2026-10-19 (+62d) | 2026-08-19 → 2026-10-21 (+63d) |  | 0d → 6.15d |
| A53690 | Backfilling & Compaction | 2026-08-20 → 2026-10-21 (+62d) | 2026-08-24 → 2026-10-26 (+63d) |  | 0d → 6.15d |
| MH-3.13.5 / MH-3.13.6 | **MH-3.13.5 / MH-3.13.6** | 2026-08-09 → 2026-08-15 (+6d) | 2026-08-29 → 2026-10-12 (+44d) |  |  |
| A53700 | Excavation | 2026-08-09 → 2026-08-15 A (+6d) | 2026-08-12 → 2026-09-20 A (+39d) | 0% → 100% | 0d → none |
| A53710 | Pipe Laying | 2026-08-13 → 2026-08-15 A (+2d) | 2026-08-22 → 2026-09-20 A (+29d) | 0% → 100% | 0d → none |
| A53720 | Install Manhole | 2026-08-13 → 2026-08-15 A (+2d) | 2026-08-17 → 2026-09-20 A (+34d) | 0% → 100% | 6d → none |
| A53740 | Backfilling & Compaction | 2026-08-25 → 2026-08-15 A (-10d) | 2026-08-29 → 2026-09-20 A (+22d) | 0% → 100% | 0d → none |
| A53730 | Testing & Inspection | 2026-08-23 → 2026-10-10 (+48d) | 2026-08-24 → 2026-10-12 (+49d) |  | 0d → 18.15d |
| MH-3.13.5.0 / MH-3.13.5.1 | **MH-3.13.5.0 / MH-3.13.5.1** | 2026-08-13 → 2026-10-10 (+58d) | 2026-09-02 → 2026-11-19 (+78d) |  |  |
| A53750 | Excavation | 2026-08-13 → 2026-10-10 (+58d) | 2026-08-17 → 2026-10-14 (+58d) |  | 0d → 6.15d |
| A53760 | Pipe Laying | 2026-08-18 → 2026-10-14 (+57d) | 2026-08-22 → 2026-10-19 (+58d) |  | 4d → 10.15d |
| A53770 | Install Manhole | 2026-08-18 → 2026-10-14 (+57d) | 2026-08-22 → 2026-10-19 (+58d) |  | 6d → 12.15d |
| A53780 | Testing & Inspection | 2026-08-23 → 2026-10-19 (+57d) | 2026-08-24 → 2026-10-21 (+58d) |  | 4d → 10.15d |
| A53790 | Backfilling & Compaction | 2026-08-30 → 2026-11-16 (+78d) | 2026-09-02 → 2026-11-19 (+78d) |  | 0d → -11d |
| MH-3.13.6 / MH-3.13.7 | **MH-3.13.6 / MH-3.13.7** | 2026-08-18 → 2026-08-15 (-3d) | 2026-09-07 → 2026-10-17 (+40d) |  |  |
| A53800 | Excavation | 2026-08-18 → 2026-08-15 A (-3d) | 2026-08-22 → 2026-09-20 A (+29d) | 0% → 100% | 0d → none |
| A53810 | Pipe Laying | 2026-08-23 → 2026-08-15 A (-8d) | 2026-08-31 → 2026-09-20 A (+20d) | 0% → 100% | 0d → none |
| A53820 | Install Manhole | 2026-08-23 → 2026-08-15 A (-8d) | 2026-08-26 → 2026-09-20 A (+25d) | 0% → 100% | 6d → none |
| A53840 | Backfilling & Compaction | 2026-09-03 → 2026-08-15 A (-19d) | 2026-09-07 → 2026-09-20 A (+13d) | 0% → 100% | 0d → none |
| A53830 | Testing & Inspection | 2026-09-01 → 2026-10-14 (+43d) | 2026-09-02 → 2026-10-17 (+45d) |  | 0d → 18.15d |
| MH-3.13.6.0 / MH-3.13.6.1 | **MH-3.13.6.0 / MH-3.13.6.1** | 2026-08-23 → 2026-08-15 (-8d) | 2026-09-12 → 2026-10-17 (+35d) |  |  |
| A53850 | Excavation | 2026-08-23 → 2026-08-15 A (-8d) | 2026-08-26 → 2026-09-20 A (+25d) | 0% → 100% | 0d → none |
| A53860 | Pipe Laying | 2026-08-27 → 2026-08-15 A (-12d) | 2026-09-05 → 2026-09-20 A (+15d) | 0% → 100% | 0d → none |
| A53870 | Install Manhole | 2026-08-27 → 2026-08-15 A (-12d) | 2026-08-31 → 2026-09-20 A (+20d) | 0% → 100% | 6d → none |
| A53890 | Backfilling & Compaction | 2026-09-08 → 2026-08-15 A (-24d) | 2026-09-12 → 2026-09-20 A (+8d) | 0% → 100% | 0d → none |
| A53880 | Testing & Inspection | 2026-09-06 → 2026-10-14 (+38d) | 2026-09-07 → 2026-10-17 (+40d) |  | 0d → 18.15d |
| MH-3.14 / MH-3.15 | **MH-3.14 / MH-3.15** | 2026-08-27 → 2026-08-15 (-12d) | 2026-09-16 → 2026-10-17 (+31d) |  |  |

| ID | Task | Start | Finish | Complete | Total float |
| --- | --- | --- | --- | --- | --- |
| A53900 | Excavation | 2026-08-27 → 2026-08-15 A (-12d) | 2026-08-31 → 2026-09-20 A (+20d) | 0% → 100% | 0d → none |
| A53910 | Pipe Laying | 2026-09-01 → 2026-08-15 A (-17d) | 2026-09-09 → 2026-09-20 A (+11d) | 0% → 100% | 0d → none |
| A53920 | Install Manhole | 2026-09-01 → 2026-08-15 A (-17d) | 2026-09-05 → 2026-09-20 A (+15d) | 0% → 100% | 6d → none |
| A53940 | Backfilling & Compaction | 2026-09-13 → 2026-08-15 A (-29d) | 2026-09-16 → 2026-09-20 A (+4d) | 0% → 100% | 0d → none |
| A53930 | Testing & Inspection | 2026-09-10 → 2026-10-14 (+34d) | 2026-09-12 → 2026-10-17 (+35d) |  | 0d → 18.15d |
| MH-3.14.0 / MH-3.14.1 | **MH-3.14.0 / MH-3.14.1** | 2026-09-01 → 2026-08-15 (-17d) | 2026-09-21 → 2026-10-17 (+26d) |  |  |
| A53950 | Excavation | 2026-09-01 → 2026-08-15 A (-17d) | 2026-09-05 → 2026-09-20 A (+15d) | 0% → 100% | 0d → none |
| A53960 | Pipe Laying | 2026-09-06 → 2026-08-15 A (-22d) | 2026-09-14 → 2026-09-20 A (+6d) | 0% → 100% | 0d → none |
| A53970 | Install Manhole | 2026-09-06 → 2026-08-15 A (-22d) | 2026-09-09 → 2026-09-20 A (+11d) | 0% → 100% | 6d → none |
| A53990 | Backfilling & Compaction | 2026-09-17 → 2026-08-15 A (-33d) | 2026-09-21 → 2026-09-20 A (-1d) | 0% → 100% | 0d → none |
| A53980 | Testing & Inspection | 2026-09-15 → 2026-10-14 (+29d) | 2026-09-16 → 2026-10-17 (+31d) |  | 0d → 18.15d |
| MH-3.15 / MH-3.16 | **MH-3.15 / MH-3.16** | 2026-09-06 → 2026-08-15 (-22d) | 2026-09-26 → 2026-10-17 (+21d) |  |  |
| A54000 | Excavation | 2026-09-06 → 2026-08-15 A (-22d) | 2026-09-09 → 2026-09-20 A (+11d) | 0% → 100% | 0d → none |
| A54010 | Pipe Laying | 2026-09-10 → 2026-08-15 A (-26d) | 2026-09-19 → 2026-09-20 A (+1d) | 0% → 100% | 0d → none |
| A54020 | Install Manhole | 2026-09-10 → 2026-08-15 A (-26d) | 2026-09-14 → 2026-09-20 A (+6d) | 0% → 100% | 6d → none |
| A54040 | Backfilling & Compaction | 2026-09-22 → 2026-08-15 A (-38d) | 2026-09-26 → 2026-09-20 A (-6d) | 0% → 100% | 0d → none |
| A54030 | Testing & Inspection | 2026-09-20 → 2026-10-14 (+24d) | 2026-09-21 → 2026-10-17 (+26d) |  | 0d → 18.15d |
| MH-3.15.0 / MH-3.15.1 | **MH-3.15.0 / MH-3.15.1** | 2026-09-10 → 2026-08-15 (-26d) | 2026-09-30 → 2026-10-17 (+17d) |  |  |
| A54050 | Excavation | 2026-09-10 → 2026-08-15 A (-26d) | 2026-09-14 → 2026-09-20 A (+6d) | 0% → 100% | 0d → none |
| A54060 | Pipe Laying | 2026-09-15 → 2026-08-15 A (-31d) | 2026-09-23 → 2026-09-20 A (-3d) | 0% → 100% | 0d → none |
| A54070 | Install Manhole | 2026-09-15 → 2026-08-15 A (-31d) | 2026-09-19 → 2026-09-20 A (+1d) | 0% → 100% | 6d → none |
| A54090 | Backfilling & Compaction | 2026-09-27 → 2026-08-15 A (-43d) | 2026-09-30 → 2026-09-20 A (-10d) | 0% → 100% | 0d → none |
| A54080 | Testing & Inspection | 2026-09-24 → 2026-10-14 (+20d) | 2026-09-26 → 2026-10-17 (+21d) |  | 0d → 18.15d |
| MH-3.16.0 / MH-3.16.1 | **MH-3.16.0 / MH-3.16.1** | 2026-09-15 → 2026-10-14 (+29d) | 2026-10-05 → 2026-11-24 (+50d) |  |  |
| A54100 | Excavation | 2026-09-15 → 2026-10-14 (+29d) | 2026-09-19 → 2026-10-19 (+30d) |  | 0d → 6.15d |
| A54110 | Pipe Laying | 2026-09-20 → 2026-10-19 (+29d) | 2026-09-28 → 2026-10-28 (+30d) |  | 0d → 6.15d |
| A54120 | Install Manhole | 2026-09-20 → 2026-10-19 (+29d) | 2026-09-23 → 2026-10-24 (+31d) |  | 6d → 12.15d |
| A54130 | Testing & Inspection | 2026-09-29 → 2026-10-28 (+29d) | 2026-09-30 → 2026-10-31 (+31d) |  | 0d → 6.15d |
| A54140 | Backfilling & Compaction | 2026-10-01 → 2026-11-21 (+51d) | 2026-10-05 → 2026-11-24 (+50d) |  | 0d → -11d |
| MH-3.16.0 / MH-3.16.1A | **MH-3.16.0 / MH-3.16.1A** | 2026-09-20 → 2026-10-19 (+29d) | 2026-10-10 → 2026-11-29 (+50d) |  |  |
| A54150 | Excavation | 2026-09-20 → 2026-10-19 (+29d) | 2026-09-23 → 2026-10-24 (+31d) |  | 0d → 6.15d |
| A54160 | Pipe Laying | 2026-09-24 → 2026-10-24 (+30d) | 2026-10-03 → 2026-11-02 (+30d) |  | 0d → 6.15d |
| A54170 | Install Manhole | 2026-09-24 → 2026-10-24 (+30d) | 2026-09-28 → 2026-10-28 (+30d) |  | 6d → 12.15d |
| A54180 | Testing & Inspection | 2026-10-04 → 2026-11-02 (+29d) | 2026-10-05 → 2026-11-04 (+30d) |  | 0d → 6.15d |
| A54190 | Backfilling & Compaction | 2026-10-06 → 2026-11-25 (+50d) | 2026-10-10 → 2026-11-29 (+50d) |  | 0d → -11d |
| MH-3.16.1 / MH-3.16.2 | **MH-3.16.1 / MH-3.16.2** | 2026-09-24 → 2026-10-24 (+30d) | 2026-10-14 → 2026-12-03 (+50d) |  |  |
| A54200 | Excavation | 2026-09-24 → 2026-10-24 (+30d) | 2026-09-28 → 2026-10-28 (+30d) |  | 0d → 6.15d |
| A54210 | Pipe Laying | 2026-09-29 → 2026-10-28 (+29d) | 2026-10-07 → 2026-11-07 (+31d) |  | 0d → 6.15d |
| A54220 | Install Manhole | 2026-09-29 → 2026-10-28 (+29d) | 2026-10-03 → 2026-11-02 (+30d) |  | 6d → 12.15d |
| A54230 | Testing & Inspection | 2026-10-08 → 2026-11-07 (+30d) | 2026-10-10 → 2026-11-09 (+30d) |  | 0d → 6.15d |
| A54240 | Backfilling & Compaction | 2026-10-11 → 2026-11-30 (+50d) | 2026-10-14 → 2026-12-03 (+50d) |  | 0d → -11d |
| MH-3.16.1.0 / MH-3.16.1.1 | **MH-3.16.1.0 / MH-3.16.1.1** | 2026-09-29 → 2026-10-28 (+29d) | 2026-10-19 → 2026-12-08 (+50d) |  |  |
| A54250 | Excavation | 2026-09-29 → 2026-10-28 (+29d) | 2026-10-03 → 2026-11-02 (+30d) |  | 0d → 6.15d |
| A54260 | Pipe Laying | 2026-10-04 → 2026-11-02 (+29d) | 2026-10-12 → 2026-11-11 (+30d) |  | 0d → 6.15d |
| A54270 | Install Manhole | 2026-10-04 → 2026-11-02 (+29d) | 2026-10-07 → 2026-11-07 (+31d) |  | 6d → 12.15d |
| A54280 | Testing & Inspection | 2026-10-13 → 2026-11-11 (+29d) | 2026-10-14 → 2026-11-14 (+31d) |  | 0d → 6.15d |
| A54290 | Backfilling & Compaction | 2026-10-15 → 2026-12-05 (+51d) | 2026-10-19 → 2026-12-08 (+50d) |  | 0d → -11d |
| MH-3.16.10 / MH-3.16.11 | **MH-3.16.10 / MH-3.16.11** | 2026-10-04 → 2026-11-02 (+29d) | 2026-10-24 → 2026-12-13 (+50d) |  |  |
| A54300 | Excavation | 2026-10-04 → 2026-11-02 (+29d) | 2026-10-07 → 2026-11-07 (+31d) |  | 0d → 6.15d |
| A54310 | Pipe Laying | 2026-10-08 → 2026-11-07 (+30d) | 2026-10-17 → 2026-11-16 (+30d) |  | 0d → 6.15d |
| A54320 | Install Manhole | 2026-10-08 → 2026-11-07 (+30d) | 2026-10-12 → 2026-11-11 (+30d) |  | 6d → 12.15d |
| A54330 | Testing & Inspection | 2026-10-18 → 2026-11-16 (+29d) | 2026-10-19 → 2026-11-18 (+30d) |  | 0d → 6.15d |
| A54340 | Backfilling & Compaction | 2026-10-20 → 2026-12-09 (+50d) | 2026-10-24 → 2026-12-13 (+50d) |  | 0d → -11d |
| MH-3.16.2 / MH-3.16.3 | **MH-3.16.2 / MH-3.16.3** | 2026-10-08 → 2026-11-07 (+30d) | 2026-10-28 → 2026-12-17 (+50d) |  |  |
| A54350 | Excavation | 2026-10-08 → 2026-11-07 (+30d) | 2026-10-12 → 2026-11-11 (+30d) |  | 0d → 6.15d |
| A54360 | Pipe Laying | 2026-10-13 → 2026-11-11 (+29d) | 2026-10-21 → 2026-11-21 (+31d) |  | 0d → 6.15d |
| A54370 | Install Manhole | 2026-10-13 → 2026-11-11 (+29d) | 2026-10-17 → 2026-11-16 (+30d) |  | 6d → 12.15d |
| A54380 | Testing & Inspection | 2026-10-22 → 2026-11-21 (+30d) | 2026-10-24 → 2026-11-23 (+30d) |  | 0d → 6.15d |
| A54390 | Backfilling & Compaction | 2026-10-25 → 2026-12-14 (+50d) | 2026-10-28 → 2026-12-17 (+50d) |  | 0d → -11d |
| MH-3.16.2.0 / MH-3.16.2.1 | **MH-3.16.2.0 / MH-3.16.2.1** | 2026-10-13 → 2026-11-11 (+29d) | 2026-11-02 → 2026-12-22 (+50d) |  |  |
| A54400 | Excavation | 2026-10-13 → 2026-11-11 (+29d) | 2026-10-17 → 2026-11-16 (+30d) |  | 1d → 6.15d |
| A54410 | Pipe Laying | 2026-10-18 → 2026-11-16 (+29d) | 2026-10-26 → 2026-11-25 (+30d) |  | 12d → 6.15d |
| A54420 | Install Manhole | 2026-10-18 → 2026-11-16 (+29d) | 2026-10-21 → 2026-11-21 (+31d) |  | 18d → 12.15d |
| A54430 | Testing & Inspection | 2026-10-27 → 2026-11-25 (+29d) | 2026-10-28 → 2026-11-28 (+31d) |  | 12d → 6.15d |
| A54440 | Backfilling & Compaction | 2026-10-29 → 2026-12-19 (+51d) | 2026-11-02 → 2026-12-22 (+50d) |  | 12d → -11d |
| MH-3.16.3 / MH-3.16.4 | **MH-3.16.3 / MH-3.16.4** | 2026-10-18 → 2026-08-15 (-64d) | 2026-11-07 → 2026-09-20 (-48d) |  |  |
| A54450 | Excavation | 2026-10-18 → 2026-08-15 A (-64d) | 2026-10-21 → 2026-09-20 A (-31d) | 0% → 100% | 1d → none |
| A54460 | Pipe Laying | 2026-10-22 → 2026-08-15 A (-68d) | 2026-10-31 → 2026-09-20 A (-41d) | 0% → 100% | 12d → none |
| A54470 | Install Manhole | 2026-10-22 → 2026-08-15 A (-68d) | 2026-10-26 → 2026-09-20 A (-36d) | 0% → 100% | 18d → none |
| A54480 | Testing & Inspection | 2026-11-01 → 2026-08-15 A (-78d) | 2026-11-02 → 2026-09-20 A (-43d) | 0% → 100% | 12d → none |

| ID | Task | Start | Finish | Complete | Total float |
| --- | --- | --- | --- | --- | --- |
| A54490 | Backfilling & Compaction | 2026-11-03 → 2026-08-15 A (-80d) | 2026-11-07 → 2026-09-20 A (-48d) | 0% → 100% | 12d → none |
| MH-3.16.3.0 / MH-3.16.3.1 | **MH-3.16.3.0 / MH-3.16.3.1** | 2026-10-22 → 2026-08-15 (-68d) | 2026-11-11 → 2026-09-20 (-52d) |  |  |
| A54500 | Excavation | 2026-10-22 → 2026-08-15 A (-68d) | 2026-10-26 → 2026-09-20 A (-36d) | 0% → 100% | 1d → none |
| A54510 | Pipe Laying | 2026-10-27 → 2026-08-15 A (-73d) | 2026-11-04 → 2026-09-20 A (-45d) | 0% → 100% | 12d → none |
| A54520 | Install Manhole | 2026-10-27 → 2026-08-15 A (-73d) | 2026-10-31 → 2026-09-20 A (-41d) | 0% → 100% | 18d → none |
| A54530 | Testing & Inspection | 2026-11-05 → 2026-08-15 A (-82d) | 2026-11-07 → 2026-09-20 A (-48d) | 0% → 100% | 12d → none |
| A54540 | Backfilling & Compaction | 2026-11-08 → 2026-08-15 A (-85d) | 2026-11-11 → 2026-09-20 A (-52d) | 0% → 100% | 12d → none |
| MH-3.16.4 / MH-3.16.5 | **MH-3.16.4 / MH-3.16.5** | 2026-10-27 → 2026-08-15 (-73d) | 2026-11-16 → 2026-09-20 (-57d) |  |  |
| A54550 | Excavation | 2026-10-27 → 2026-08-15 A (-73d) | 2026-10-31 → 2026-09-20 A (-41d) | 0% → 100% | 1d → none |
| A54560 | Pipe Laying | 2026-11-01 → 2026-08-15 A (-78d) | 2026-11-09 → 2026-09-20 A (-50d) | 0% → 100% | 12d → none |
| A54570 | Install Manhole | 2026-11-01 → 2026-08-15 A (-78d) | 2026-11-04 → 2026-09-20 A (-45d) | 0% → 100% | 18d → none |
| A54580 | Testing & Inspection | 2026-11-10 → 2026-08-15 A (-87d) | 2026-11-11 → 2026-09-20 A (-52d) | 0% → 100% | 12d → none |
| A54590 | Backfilling & Compaction | 2026-11-12 → 2026-08-15 A (-89d) | 2026-11-16 → 2026-09-20 A (-57d) | 0% → 100% | 12d → none |
| MH-3.16.4.0 / MH-3.16.4.1 | **MH-3.16.4.0 / MH-3.16.4.1** | 2026-11-01 → 2026-08-15 (-78d) | 2026-11-21 → 2026-09-20 (-62d) |  |  |
| A54600 | Excavation | 2026-11-01 → 2026-08-15 A (-78d) | 2026-11-04 → 2026-09-20 A (-45d) | 0% → 100% | 1d → none |
| A54610 | Pipe Laying | 2026-11-05 → 2026-08-15 A (-82d) | 2026-11-14 → 2026-09-20 A (-55d) | 0% → 100% | 12d → none |
| A54620 | Install Manhole | 2026-11-05 → 2026-08-15 A (-82d) | 2026-11-09 → 2026-09-20 A (-50d) | 0% → 100% | 18d → none |
| A54630 | Testing & Inspection | 2026-11-15 → 2026-08-15 A (-92d) | 2026-11-16 → 2026-09-20 A (-57d) | 0% → 100% | 12d → none |
| A54640 | Backfilling & Compaction | 2026-11-17 → 2026-08-15 A (-94d) | 2026-11-21 → 2026-09-20 A (-62d) | 0% → 100% | 12d → none |
| MH-3.16.5 / MH-3.16.6 | **MH-3.16.5 / MH-3.16.6** | 2026-11-05 → 2026-08-15 (-82d) | 2026-11-25 → 2026-09-20 (-66d) |  |  |
| A54650 | Excavation | 2026-11-05 → 2026-08-15 A (-82d) | 2026-11-09 → 2026-09-20 A (-50d) | 0% → 100% | 1d → none |
| A54660 | Pipe Laying | 2026-11-10 → 2026-08-15 A (-87d) | 2026-11-18 → 2026-09-20 A (-59d) | 0% → 100% | 12d → none |
| A54670 | Install Manhole | 2026-11-10 → 2026-08-15 A (-87d) | 2026-11-14 → 2026-09-20 A (-55d) | 0% → 100% | 18d → none |
| A54680 | Testing & Inspection | 2026-11-19 → 2026-08-15 A (-96d) | 2026-11-21 → 2026-09-20 A (-62d) | 0% → 100% | 12d → none |
| A54690 | Backfilling & Compaction | 2026-11-22 → 2026-08-15 A (-99d) | 2026-11-25 → 2026-09-20 A (-66d) | 0% → 100% | 12d → none |
| MH-3.16.5.0 / MH-3.16.5.1 | **MH-3.16.5.0 / MH-3.16.5.1** | 2026-11-10 → 2026-08-15 (-87d) | 2026-11-30 → 2026-09-20 (-71d) |  |  |
| A54700 | Excavation | 2026-11-10 → 2026-08-15 A (-87d) | 2026-11-14 → 2026-09-20 A (-55d) | 0% → 100% | 1d → none |
| A54710 | Pipe Laying | 2026-11-15 → 2026-08-15 A (-92d) | 2026-11-23 → 2026-09-20 A (-64d) | 0% → 100% | 12d → none |
| A54720 | Install Manhole | 2026-11-15 → 2026-08-15 A (-92d) | 2026-11-18 → 2026-09-20 A (-59d) | 0% → 100% | 18d → none |
| A54730 | Testing & Inspection | 2026-11-24 → 2026-08-15 A (-101d) | 2026-11-25 → 2026-09-20 A (-66d) | 0% → 100% | 12d → none |
| A54740 | Backfilling & Compaction | 2026-11-26 → 2026-08-15 A (-103d) | 2026-11-30 → 2026-09-20 A (-71d) | 0% → 100% | 12d → none |
| MH-3.16.6 / MH-3.16.7 | **MH-3.16.6 / MH-3.16.7** | 2026-11-15 → 2026-08-15 (-92d) | 2026-12-05 → 2026-09-20 (-76d) |  |  |
| A54750 | Excavation | 2026-11-15 → 2026-08-15 A (-92d) | 2026-11-18 → 2026-09-20 A (-59d) | 0% → 100% | 1d → none |
| A54760 | Pipe Laying | 2026-11-19 → 2026-08-15 A (-96d) | 2026-11-28 → 2026-09-20 A (-69d) | 0% → 100% | 12d → none |
| A54770 | Install Manhole | 2026-11-19 → 2026-08-15 A (-96d) | 2026-11-23 → 2026-09-20 A (-64d) | 0% → 100% | 18d → none |
| A54780 | Testing & Inspection | 2026-11-29 → 2026-08-15 A (-106d) | 2026-11-30 → 2026-09-20 A (-71d) | 0% → 100% | 12d → none |
| A54790 | Backfilling & Compaction | 2026-12-01 → 2026-08-15 A (-108d) | 2026-12-05 → 2026-09-20 A (-76d) | 0% → 100% | 12d → none |
| MH-3.16.6.0 / MH-3.16.6.1 | **MH-3.16.6.0 / MH-3.16.6.1** | 2026-11-19 → 2026-08-15 (-96d) | 2026-12-09 → 2026-09-20 (-80d) |  |  |
| A54800 | Excavation | 2026-11-19 → 2026-08-15 A (-96d) | 2026-11-23 → 2026-09-20 A (-64d) | 0% → 100% | 1d → none |
| A54810 | Pipe Laying | 2026-11-24 → 2026-08-15 A (-101d) | 2026-12-02 → 2026-09-20 A (-73d) | 0% → 100% | 12d → none |
| A54820 | Install Manhole | 2026-11-24 → 2026-08-15 A (-101d) | 2026-11-28 → 2026-09-20 A (-69d) | 0% → 100% | 18d → none |
| A54830 | Testing & Inspection | 2026-12-03 → 2026-08-15 A (-110d) | 2026-12-05 → 2026-09-20 A (-76d) | 0% → 100% | 12d → none |
| A54840 | Backfilling & Compaction | 2026-12-06 → 2026-08-15 A (-113d) | 2026-12-09 → 2026-09-20 A (-80d) | 0% → 100% | 12d → none |
| MH-3.16.7 / MH-3.16.8 | **MH-3.16.7 / MH-3.16.8** | 2026-11-24 → 2026-08-15 (-101d) | 2026-12-14 → 2026-09-20 (-85d) |  |  |
| A54850 | Excavation | 2026-11-24 → 2026-08-15 A (-101d) | 2026-11-28 → 2026-09-20 A (-69d) | 0% → 100% | 1d → none |
| A54860 | Pipe Laying | 2026-11-29 → 2026-08-15 A (-106d) | 2026-12-07 → 2026-09-20 A (-78d) | 0% → 100% | 12d → none |
| A54870 | Install Manhole | 2026-11-29 → 2026-08-15 A (-106d) | 2026-12-02 → 2026-09-20 A (-73d) | 0% → 100% | 18d → none |
| A54880 | Testing & Inspection | 2026-12-08 → 2026-08-15 A (-115d) | 2026-12-09 → 2026-09-20 A (-80d) | 0% → 100% | 12d → none |
| A54890 | Backfilling & Compaction | 2026-12-10 → 2026-08-15 A (-117d) | 2026-12-14 → 2026-09-20 A (-85d) | 0% → 100% | 12d → none |
| MH-3.16.7.0 / MH-3.16.7.1 | **MH-3.16.7.0 / MH-3.16.7.1** | 2026-11-29 → 2026-08-15 (-106d) | 2026-12-19 → 2026-09-20 (-90d) |  |  |
| A54900 | Excavation | 2026-11-29 → 2026-08-15 A (-106d) | 2026-12-02 → 2026-09-20 A (-73d) | 0% → 100% | 1d → none |
| A54910 | Pipe Laying | 2026-12-03 → 2026-08-15 A (-110d) | 2026-12-12 → 2026-09-20 A (-83d) | 0% → 100% | 12d → none |
| A54920 | Install Manhole | 2026-12-03 → 2026-08-15 A (-110d) | 2026-12-07 → 2026-09-20 A (-78d) | 0% → 100% | 18d → none |
| A54930 | Testing & Inspection | 2026-12-13 → 2026-08-15 A (-120d) | 2026-12-14 → 2026-09-20 A (-85d) | 0% → 100% | 12d → none |
| A54940 | Backfilling & Compaction | 2026-12-15 → 2026-08-15 A (-122d) | 2026-12-19 → 2026-09-20 A (-90d) | 0% → 100% | 12d → none |
| MH-3.16.8 / MH-3.16.9 | **MH-3.16.8 / MH-3.16.9** | 2026-12-03 → 2026-08-15 (-110d) | 2026-12-23 → 2026-09-20 (-94d) |  |  |
| A54950 | Excavation | 2026-12-03 → 2026-08-15 A (-110d) | 2026-12-07 → 2026-09-20 A (-78d) | 0% → 100% | 1d → none |
| A54960 | Pipe Laying | 2026-12-08 → 2026-08-15 A (-115d) | 2026-12-16 → 2026-09-20 A (-87d) | 0% → 100% | 12d → none |
| A54970 | Install Manhole | 2026-12-08 → 2026-08-15 A (-115d) | 2026-12-12 → 2026-09-20 A (-83d) | 0% → 100% | 18d → none |
| A54980 | Testing & Inspection | 2026-12-17 → 2026-08-15 A (-124d) | 2026-12-19 → 2026-09-20 A (-90d) | 0% → 100% | 12d → none |
| A54990 | Backfilling & Compaction | 2026-12-20 → 2026-08-15 A (-127d) | 2026-12-23 → 2026-09-20 A (-94d) | 0% → 100% | 12d → none |
| MH-3.16.8.0 / MH-3.16.8.1 | **MH-3.16.8.0 / MH-3.16.8.1** | 2026-12-08 → 2026-08-15 (-115d) | 2026-12-28 → 2026-09-20 (-99d) |  |  |
| A55000 | Excavation | 2026-12-08 → 2026-08-15 A (-115d) | 2026-12-12 → 2026-09-20 A (-83d) | 0% → 100% | 1d → none |
| A55010 | Pipe Laying | 2026-12-13 → 2026-08-15 A (-120d) | 2026-12-16 → 2026-09-20 A (-87d) | 0% → 100% | 16d → none |
| A55020 | Install Manhole | 2026-12-13 → 2026-08-15 A (-120d) | 2026-12-16 → 2026-09-20 A (-87d) | 0% → 100% | 18d → none |
| A55030 | Testing & Inspection | 2026-12-17 → 2026-08-15 A (-124d) | 2026-12-19 → 2026-09-20 A (-90d) | 0% → 100% | 16d → none |
| A55040 | Backfilling & Compaction | 2026-12-24 → 2026-08-15 A (-131d) | 2026-12-28 → 2026-09-20 A (-99d) | 0% → 100% | 12d → none |
| MH-3.16.9 / MH-3.16.10 | **MH-3.16.9 / MH-3.16.10** | 2026-12-13 → 2026-08-15 (-120d) | 2027-01-02 → 2026-09-20 (-104d) |  |  |
| A55050 | Excavation | 2026-12-13 → 2026-08-15 A (-120d) | 2026-12-16 → 2026-09-20 A (-87d) | 0% → 100% | 1d → none |
| A55060 | Pipe Laying | 2026-12-17 → 2026-08-15 A (-124d) | 2026-12-26 → 2026-09-20 A (-97d) | 0% → 100% | 12d → none |

| ID | Task | Start | Finish | Duration | Complete | Total float |
| --- | --- | --- | --- | --- | --- | --- |
| A55070 | Install Manhole | 2026-12-17 → 2026-08-15 A (-124d) | 2026-12-21 → 2026-09-20 A (-92d) |  | 0% → 100% | 18d → none |
| A55080 | Testing & Inspection | 2026-12-27 → 2026-08-15 A (-134d) | 2026-12-28 → 2026-09-20 A (-99d) |  | 0% → 100% | 12d → none |
| A55090 | Backfilling & Compaction | 2026-12-29 → 2026-08-15 A (-136d) | 2027-01-02 → 2026-09-20 A (-104d) |  | 0% → 100% | 12d → none |
| MH-3.16.9.0 / MH-3.16.9.1 | **MH-3.16.9.0 / MH-3.16.9.1** | 2026-12-17 → 2026-08-15 (-124d) | 2027-01-19 → 2026-09-20 (-121d) |  |  |  |
| A55100 | Excavation | 2026-12-17 → 2026-08-15 A (-124d) | 2026-12-28 → 2026-09-20 A (-99d) | 10d → 4d | 0% → 100% | 1d → none |
| A55110 | Pipe Laying | 2026-12-29 → 2026-08-15 A (-136d) | 2027-01-11 → 2026-09-20 A (-113d) | 12d → 8d | 0% → 100% | 2d → none |
| A55120 | Install Manhole | 2026-12-29 → 2026-08-15 A (-136d) | 2027-01-14 → 2026-09-20 A (-116d) | 15d → 4d | 0% → 100% | 1d → none |
| A55130 | Testing & Inspection | 2027-01-12 → 2026-08-15 A (-150d) | 2027-01-13 → 2026-09-20 A (-115d) |  | 0% → 100% | 2d → none |
| A55140 | Backfilling & Compaction | 2027-01-16 → 2026-08-15 A (-154d) | 2027-01-19 → 2026-09-20 A (-121d) |  | 0% → 100% | 1d → none |
| LR 27 | **LR 27** | 2026-03-16 → 2026-08-15 (+152d) | 2026-05-28 → 2026-10-07 (+132d) |  |  |  |
| MH-3.16 / MH-3.17 | **MH-3.16 / MH-3.17** | 2026-04-09 → 2026-08-15 (+128d) | 2026-05-05 → 2026-10-07 (+155d) |  |  |  |
| A55500 | Excavation | 2026-04-09 → 2026-08-15 A (+128d) | 2026-04-12 → 2026-09-20 A (+161d) |  | 0% → 100% | 66d → none |
| A55510 | Pipe Laying | 2026-04-13 → 2026-08-15 A (+124d) | 2026-04-21 → 2026-09-20 A (+152d) |  | 0% → 100% | 109d → none |
| A55520 | Install Manhole | 2026-04-13 → 2026-08-15 A (+124d) | 2026-04-16 → 2026-09-20 A (+157d) |  | 0% → 100% | 115d → none |
| A55540 | Backfilling & Compaction | 2026-05-02 → 2026-08-15 A (+105d) | 2026-05-05 → 2026-09-20 A (+138d) |  | 0% → 100% | 103d → none |
| A55530 | Testing & Inspection | 2026-04-22 → 2026-10-05 (+166d) | 2026-04-23 → 2026-10-07 (+167d) |  |  | 109d → 15.56d |
| MH-3.17 / MH-3.18 | **MH-3.17 / MH-3.18** | 2026-04-13 → 2026-08-15 (+124d) | 2026-05-10 → 2026-10-07 (+150d) |  |  |  |
| A55550 | Excavation | 2026-04-13 → 2026-08-15 A (+124d) | 2026-04-15 → 2026-09-20 A (+158d) |  | 0% → 100% | 66d → none |
| A55560 | Pipe Laying | 2026-04-16 → 2026-08-15 A (+121d) | 2026-04-25 → 2026-09-20 A (+148d) |  | 0% → 100% | 110d → none |
| A55570 | Install Manhole | 2026-04-16 → 2026-08-15 A (+121d) | 2026-04-20 → 2026-09-20 A (+153d) |  | 0% → 100% | 116d → none |
| A55590 | Backfilling & Compaction | 2026-05-06 → 2026-08-15 A (+101d) | 2026-05-10 → 2026-09-20 A (+133d) |  | 0% → 100% | 103d → none |
| A55580 | Testing & Inspection | 2026-04-26 → 2026-10-05 (+162d) | 2026-04-27 → 2026-10-07 (+163d) |  |  | 110d → 15.56d |
| MH-3.17.0 / MH-3.17.1 | **MH-3.17.0 / MH-3.17.1** | 2026-03-16 → 2026-08-15 (+152d) | 2026-03-30 → 2026-10-07 (+191d) |  |  |  |
| A55150 | Excavation | 2026-03-16 → 2026-08-15 A (+152d) | 2026-03-18 → 2026-09-20 A (+186d) |  | 0% → 100% | 66d → none |
| A55160 | Pipe Laying | 2026-03-19 → 2026-08-15 A (+149d) | 2026-03-23 → 2026-09-20 A (+181d) |  | 0% → 100% | 106d → none |
| A55170 | Install Manhole | 2026-03-19 → 2026-08-15 A (+149d) | 2026-03-23 → 2026-09-20 A (+181d) |  | 0% → 100% | 108d → none |
| A55190 | Backfilling & Compaction | 2026-03-26 → 2026-08-15 A (+142d) | 2026-03-30 → 2026-09-20 A (+174d) |  | 0% → 100% | 106d → none |
| A55180 | Testing & Inspection | 2026-03-24 → 2026-10-05 (+195d) | 2026-03-25 → 2026-10-07 (+196d) |  |  | 106d → 15.56d |
| MH-3.18 / MH-3.19 | **MH-3.18 / MH-3.19** | 2026-04-16 → 2026-08-15 (+121d) | 2026-05-14 → 2026-10-07 (+146d) |  |  |  |
| A55600 | Excavation | 2026-04-16 → 2026-08-15 A (+121d) | 2026-04-19 → 2026-09-20 A (+154d) |  | 0% → 100% | 66d → none |
| A55610 | Pipe Laying | 2026-04-20 → 2026-08-15 A (+117d) | 2026-04-28 → 2026-09-20 A (+145d) |  | 0% → 100% | 111d → none |
| A55620 | Install Manhole | 2026-04-20 → 2026-08-15 A (+117d) | 2026-04-23 → 2026-09-20 A (+150d) |  | 0% → 100% | 117d → none |
| A55640 | Backfilling & Compaction | 2026-05-11 → 2026-08-15 A (+96d) | 2026-05-14 → 2026-09-20 A (+129d) |  | 0% → 100% | 103d → none |
| A55630 | Testing & Inspection | 2026-04-29 → 2026-10-05 (+159d) | 2026-04-30 → 2026-10-07 (+160d) |  |  | 111d → 15.56d |
| MH-3.18.0 / MH-3.18.1 | **MH-3.18.0 / MH-3.18.1** | 2026-03-19 → 2026-08-15 (+149d) | 2026-04-07 → 2026-10-07 (+183d) |  |  |  |
| A55200 | Excavation | 2026-03-19 → 2026-08-15 A (+149d) | 2026-03-22 → 2026-09-20 A (+182d) |  | 0% → 100% | 66d → none |
| A55210 | Pipe Laying | 2026-03-23 → 2026-08-15 A (+145d) | 2026-03-31 → 2026-09-20 A (+173d) |  | 0% → 100% | 103d → none |
| A55220 | Install Manhole | 2026-03-23 → 2026-08-15 A (+145d) | 2026-03-26 → 2026-09-20 A (+178d) |  | 0% → 100% | 109d → none |
| A55240 | Backfilling & Compaction | 2026-04-04 → 2026-08-15 A (+133d) | 2026-04-07 → 2026-09-20 A (+166d) |  | 0% → 100% | 103d → none |
| A55230 | Testing & Inspection | 2026-04-01 → 2026-10-05 (+187d) | 2026-04-02 → 2026-10-07 (+188d) |  |  | 103d → 15.56d |
| MH-3.19 / MH-3.20 | **MH-3.19 / MH-3.20** | 2026-04-20 → 2026-08-15 (+117d) | 2026-05-19 → 2026-10-07 (+141d) |  |  |  |
| A55650 | Excavation | 2026-04-20 → 2026-08-15 A (+117d) | 2026-04-22 → 2026-09-20 A (+151d) |  | 0% → 100% | 66d → none |
| A55660 | Pipe Laying | 2026-04-23 → 2026-08-15 A (+114d) | 2026-05-02 → 2026-09-20 A (+141d) |  | 0% → 100% | 112d → none |
| A55670 | Install Manhole | 2026-04-23 → 2026-08-15 A (+114d) | 2026-04-27 → 2026-09-20 A (+146d) |  | 0% → 100% | 118d → none |
| A55690 | Backfilling & Compaction | 2026-05-16 → 2026-08-15 A (+91d) | 2026-05-19 → 2026-09-20 A (+124d) |  | 0% → 100% | 103d → none |
| A55680 | Testing & Inspection | 2026-05-03 → 2026-10-05 (+155d) | 2026-05-04 → 2026-10-07 (+156d) |  |  | 112d → 15.56d |
| MH-3.19.0 / MH-3.19.1 | **MH-3.19.0 / MH-3.19.1** | 2026-03-23 → 2026-08-15 (+145d) | 2026-04-12 → 2026-10-07 (+178d) |  |  |  |
| A55250 | Excavation | 2026-03-23 → 2026-08-15 A (+145d) | 2026-03-25 → 2026-09-20 A (+179d) |  | 0% → 100% | 66d → none |
| A55260 | Pipe Laying | 2026-03-26 → 2026-08-15 A (+142d) | 2026-04-04 → 2026-09-20 A (+169d) |  | 0% → 100% | 104d → none |
| A55270 | Install Manhole | 2026-03-26 → 2026-08-15 A (+142d) | 2026-03-30 → 2026-09-20 A (+174d) |  | 0% → 100% | 110d → none |
| A55290 | Backfilling & Compaction | 2026-04-08 → 2026-08-15 A (+129d) | 2026-04-12 → 2026-09-20 A (+161d) |  | 0% → 100% | 103d → none |
| A55280 | Testing & Inspection | 2026-04-05 → 2026-10-05 (+183d) | 2026-04-06 → 2026-10-07 (+184d) |  |  | 104d → 15.56d |
| MH-3.20 / MH-3.21 | **MH-3.20 / MH-3.21** | 2026-04-23 → 2026-08-15 (+114d) | 2026-05-24 → 2026-10-07 (+136d) |  |  |  |
| A55700 | Excavation | 2026-04-23 → 2026-08-15 A (+114d) | 2026-04-26 → 2026-09-20 A (+147d) |  | 0% → 100% | 66d → none |
| A55710 | Pipe Laying | 2026-04-27 → 2026-08-15 A (+110d) | 2026-05-05 → 2026-09-20 A (+138d) |  | 0% → 100% | 113d → none |
| A55720 | Install Manhole | 2026-04-27 → 2026-08-15 A (+110d) | 2026-04-30 → 2026-09-20 A (+143d) |  | 0% → 100% | 119d → none |
| A55740 | Backfilling & Compaction | 2026-05-20 → 2026-08-15 A (+87d) | 2026-05-24 → 2026-09-20 A (+119d) |  | 0% → 100% | 103d → none |
| A55730 | Testing & Inspection | 2026-05-06 → 2026-10-05 (+152d) | 2026-05-07 → 2026-10-07 (+153d) |  |  | 113d → 15.56d |
| MH-3.20.0 / MH-3.20.1 | **MH-3.20.0 / MH-3.20.1** | 2026-03-26 → 2026-08-15 (+142d) | 2026-04-16 → 2026-10-07 (+174d) |  |  |  |
| A55300 | Excavation | 2026-03-26 → 2026-08-15 A (+142d) | 2026-03-29 → 2026-09-20 A (+175d) |  | 0% → 100% | 66d → none |
| A55310 | Pipe Laying | 2026-03-30 → 2026-08-15 A (+138d) | 2026-04-07 → 2026-09-20 A (+166d) |  | 0% → 100% | 105d → none |
| A55320 | Install Manhole | 2026-03-30 → 2026-08-15 A (+138d) | 2026-04-02 → 2026-09-20 A (+171d) |  | 0% → 100% | 111d → none |
| A55340 | Backfilling & Compaction | 2026-04-13 → 2026-08-15 A (+124d) | 2026-04-16 → 2026-09-20 A (+157d) |  | 0% → 100% | 103d → none |
| A55330 | Testing & Inspection | 2026-04-08 → 2026-10-05 (+180d) | 2026-04-09 → 2026-10-07 (+181d) |  |  | 105d → 15.56d |
| MH-3.21 / MH-3.22 | **MH-3.21 / MH-3.22** | 2026-04-27 → 2026-08-15 (+110d) | 2026-05-28 → 2026-10-07 (+132d) |  |  |  |
| A55750 | Excavation | 2026-04-27 → 2026-08-15 A (+110d) | 2026-04-29 → 2026-09-20 A (+144d) |  | 0% → 100% | 66d → none |
| A55760 | Pipe Laying | 2026-04-30 → 2026-08-15 A (+107d) | 2026-05-09 → 2026-09-20 A (+134d) |  | 0% → 100% | 114d → none |
| A55770 | Install Manhole | 2026-04-30 → 2026-08-15 A (+107d) | 2026-05-04 → 2026-09-20 A (+139d) |  | 0% → 100% | 120d → none |
| A55790 | Backfilling & Compaction | 2026-05-25 → 2026-08-15 A (+82d) | 2026-05-28 → 2026-09-20 A (+115d) |  | 0% → 100% | 103d → none |
| A55780 | Testing & Inspection | 2026-05-10 → 2026-10-05 (+148d) | 2026-05-11 → 2026-10-07 (+149d) |  |  | 114d → 15.56d |

| ID | Task | Start | Finish | Complete | Total float |
| --- | --- | --- | --- | --- | --- |
| MH-3.21.0 / MH-3.21.1 | **MH-3.21.0 / MH-3.21.1** | 2026-03-30 → 2026-08-15 (+138d) | 2026-04-21 → 2026-10-07 (+169d) |  |  |
| A55350 | Excavation | 2026-03-30 → 2026-08-15 A (+138d) | 2026-04-01 → 2026-09-20 A (+172d) | 0% → 100% | 66d → none |
| A55360 | Pipe Laying | 2026-04-02 → 2026-08-15 A (+135d) | 2026-04-11 → 2026-09-20 A (+162d) | 0% → 100% | 106d → none |
| A55370 | Install Manhole | 2026-04-02 → 2026-08-15 A (+135d) | 2026-04-06 → 2026-09-20 A (+167d) | 0% → 100% | 112d → none |
| A55390 | Backfilling & Compaction | 2026-04-18 → 2026-08-15 A (+119d) | 2026-04-21 → 2026-09-20 A (+152d) | 0% → 100% | 103d → none |
| A55380 | Testing & Inspection | 2026-04-12 → 2026-10-05 (+176d) | 2026-04-13 → 2026-10-07 (+177d) |  | 106d → 15.56d |
| MH-3.22 / MH-3.23 | **MH-3.22 / MH-3.23** | 2026-04-02 → 2026-08-15 (+135d) | 2026-04-26 → 2026-10-07 (+164d) |  |  |
| A55400 | Excavation | 2026-04-02 → 2026-08-15 A (+135d) | 2026-04-05 → 2026-09-20 A (+168d) | 0% → 100% | 66d → none |
| A55410 | Pipe Laying | 2026-04-06 → 2026-08-15 A (+131d) | 2026-04-14 → 2026-09-20 A (+159d) | 0% → 100% | 107d → none |
| A55420 | Install Manhole | 2026-04-06 → 2026-08-15 A (+131d) | 2026-04-09 → 2026-09-20 A (+164d) | 0% → 100% | 113d → none |
| A55440 | Backfilling & Compaction | 2026-04-22 → 2026-08-15 A (+115d) | 2026-04-26 → 2026-09-20 A (+147d) | 0% → 100% | 103d → none |
| A55430 | Testing & Inspection | 2026-04-15 → 2026-10-05 (+173d) | 2026-04-16 → 2026-10-07 (+174d) |  | 107d → 15.56d |
| MH-3.22.0 / MH-3.22.1 | **MH-3.22.0 / MH-3.22.1** | 2026-04-06 → 2026-08-15 (+131d) | 2026-04-30 → 2026-10-07 (+160d) |  |  |
| A55450 | Excavation | 2026-04-06 → 2026-08-15 A (+131d) | 2026-04-08 → 2026-09-20 A (+165d) | 0% → 100% | 66d → none |
| A55460 | Pipe Laying | 2026-04-09 → 2026-08-15 A (+128d) | 2026-04-18 → 2026-09-20 A (+155d) | 0% → 100% | 108d → none |
| A55470 | Install Manhole | 2026-04-09 → 2026-08-15 A (+128d) | 2026-04-13 → 2026-09-20 A (+160d) | 0% → 100% | 114d → none |
| A55490 | Backfilling & Compaction | 2026-04-27 → 2026-08-15 A (+110d) | 2026-04-30 → 2026-09-20 A (+143d) | 0% → 100% | 103d → none |
| A55480 | Testing & Inspection | 2026-04-19 → 2026-10-05 (+169d) | 2026-04-20 → 2026-10-07 (+170d) |  | 108d → 15.56d |
| IRRN1 | **IRRIGATION NETWORK-1** | 2026-10-04 → 2026-08-20 (-45d) | 2027-02-01 → 2027-04-13 (+71d) |  |  |
| R1 | **Road 18** | 2026-10-13 → 2026-08-20 (-54d) | 2026-12-21 → 2027-02-06 (+47d) |  |  |
| A89970 | Road Crossing Works | 2026-11-05 → 2026-08-20 A (-77d) | 2026-11-16 → 2026-09-28 A (-49d) | 0% → 100% | 58d → none |
| A89960 | Pipe Laying | 2026-10-25 → 2026-09-15 A (-40d) | 2026-11-04 → 2027-01-02 (+59d) | 0% → 99% | 38d → -1.6d |
| A90010 | Backfilling | 2026-12-10 → 2026-09-15 A (-86d) | 2026-12-21 → 2027-02-06 (+47d) | 0% → 99% | 38d → -1.6d |
| A90020 | Trench Excavation | 2026-10-13 → 2026-09-15 A (-28d) | 2026-10-24 → 2027-01-02 (+70d) | 0% → 99% | 38d → -1.6d |
| A89980 | Valve Chambers Civil Works | 2026-11-05 → 2027-01-02 (+58d) | 2026-11-16 → 2027-01-13 (+58d) |  | 38d → -1.6d |
| A89990 | Valve Installation | 2026-11-17 → 2027-01-13 (+57d) | 2026-11-28 → 2027-01-25 (+58d) |  | 38d → -1.6d |
| A90000 | Testing | 2026-11-29 → 2027-01-25 (+57d) | 2026-12-09 → 2027-02-06 (+59d) |  | 38d → -1.6d |
| R11 | **Road 19** | 2026-10-13 → 2026-08-20 (-54d) | 2026-12-21 → 2027-02-07 (+48d) |  |  |
| A90040 | Road Crossing Works | 2026-11-05 → 2026-08-20 A (-77d) | 2026-11-16 → 2026-09-28 A (-49d) | 0% → 100% | 58d → none |
| A90030 | Pipe Laying | 2026-10-25 → 2026-09-15 A (-40d) | 2026-11-04 → 2027-01-02 (+59d) | 0% → 98% | 38d → -2.04d |
| A90080 | Backfilling | 2026-12-10 → 2026-09-15 A (-86d) | 2026-12-21 → 2027-02-07 (+48d) | 0% → 98% | 38d → -2.04d |
| A90090 | Trench Excavation | 2026-10-13 → 2026-09-15 A (-28d) | 2026-10-24 → 2027-01-02 (+70d) | 0% → 98% | 38d → -2.04d |
| A90050 | Valve Chambers Civil Works | 2026-11-05 → 2027-01-02 (+58d) | 2026-11-16 → 2027-01-13 (+58d) |  | 38d → -2.04d |
| A90060 | Valve Installation | 2026-11-17 → 2027-01-13 (+57d) | 2026-11-28 → 2027-01-25 (+58d) |  | 38d → -2.04d |
| A90070 | Testing | 2026-11-29 → 2027-01-25 (+57d) | 2026-12-09 → 2027-02-06 (+59d) |  | 38d → -2.04d |
| R1111 | **Road 21** | 2026-10-13 → 2026-08-20 (-54d) | 2026-12-21 → 2027-03-13 (+82d) |  |  |
| A90180 | Road Crossing Works | 2026-11-05 → 2026-08-20 A (-77d) | 2026-11-16 → 2026-09-28 A (-49d) | 0% → 100% | 58d → none |
| A90230 | Trench Excavation | 2026-10-13 → 2027-01-02 (+81d) | 2026-10-24 → 2027-01-13 (+81d) |  | 38d → -31.58d |
| A90170 | Pipe Laying | 2026-10-25 → 2027-01-13 (+80d) | 2026-11-04 → 2027-01-25 (+82d) |  | 38d → -31.58d |
| A90190 | Valve Chambers Civil Works | 2026-11-05 → 2027-01-25 (+81d) | 2026-11-16 → 2027-02-06 (+82d) |  | 38d → -31.58d |
| A90200 | Valve Installation | 2026-11-17 → 2027-02-06 (+81d) | 2026-11-28 → 2027-02-17 (+81d) |  | 38d → -31.58d |
| A90210 | Testing | 2026-11-29 → 2027-02-17 (+80d) | 2026-12-09 → 2027-03-01 (+82d) |  | 38d → -31.58d |
| A90220 | Backfilling | 2026-12-10 → 2027-03-01 (+81d) | 2026-12-21 → 2027-03-13 (+82d) |  | 38d → -31.58d |
| R112 | **Road 20** | 2026-10-13 → 2026-08-20 (-54d) | 2026-12-21 → 2027-02-07 (+48d) |  |  |
| A90110 | Road Crossing Works | 2026-11-05 → 2026-08-20 A (-77d) | 2026-11-16 → 2026-09-28 A (-49d) | 0% → 100% | 58d → none |
| A90100 | Pipe Laying | 2026-10-25 → 2026-09-15 A (-40d) | 2026-11-04 → 2027-01-02 (+59d) | 0% → 98% | 38d → -2.04d |
| A90150 | Backfilling | 2026-12-10 → 2026-09-15 A (-86d) | 2026-12-21 → 2027-02-07 (+48d) | 0% → 98% | 38d → -2.04d |
| A90160 | Trench Excavation | 2026-10-13 → 2026-09-15 A (-28d) | 2026-10-24 → 2027-01-02 (+70d) | 0% → 98% | 38d → -2.04d |
| A90120 | Valve Chambers Civil Works | 2026-11-05 → 2027-01-02 (+58d) | 2026-11-16 → 2027-01-13 (+58d) |  | 38d → -2.04d |
| A90130 | Valve Installation | 2026-11-17 → 2027-01-13 (+57d) | 2026-11-28 → 2027-01-25 (+58d) |  | 38d → -2.04d |
| A90140 | Testing | 2026-11-29 → 2027-01-25 (+57d) | 2026-12-09 → 2027-02-06 (+59d) |  | 38d → -2.04d |
| R121 | **Road 22** | 2026-10-13 → 2026-08-20 (-54d) | 2026-12-21 → 2027-02-22 (+63d) |  |  |
| A90250 | Road Crossing Works | 2026-11-05 → 2026-08-20 A (-77d) | 2026-11-16 → 2026-09-28 A (-49d) | 0% → 100% | 58d → none |
| A90240 | Pipe Laying | 2026-10-25 → 2026-09-15 A (-40d) | 2026-11-04 → 2027-01-18 (+75d) | 0% → 97% | 38d → -15.92d |
| A90290 | Backfilling | 2026-12-10 → 2026-09-15 A (-86d) | 2026-12-21 → 2027-02-22 (+63d) | 0% → 97% | 38d → -15.92d |
| A90300 | Trench Excavation | 2026-10-13 → 2026-09-15 A (-28d) | 2026-10-24 → 2027-01-18 (+86d) | 0% → 97% | 38d → -15.92d |
| A90260 | Valve Chambers Civil Works | 2026-11-05 → 2027-01-18 (+74d) | 2026-11-16 → 2027-01-30 (+75d) |  | 38d → -15.92d |
| A90270 | Valve Installation | 2026-11-17 → 2027-01-30 (+74d) | 2026-11-28 → 2027-02-10 (+74d) |  | 38d → -15.92d |
| A90280 | Testing | 2026-11-29 → 2027-02-10 (+73d) | 2026-12-09 → 2027-02-22 (+75d) |  | 38d → -15.92d |
| R1121 | **Road 24** | 2026-10-13 → 2026-08-20 (-54d) | 2026-12-21 → 2027-03-29 (+98d) |  |  |
| A89900 | Road Crossing Works | 2026-11-05 → 2026-08-20 A (-77d) | 2026-11-16 → 2026-09-28 A (-49d) | 0% → 100% | 58d → none |
| A89950 | Trench Excavation | 2026-10-13 → 2027-01-18 (+97d) | 2026-10-24 → 2027-01-30 (+98d) |  | 38d → -45.02d |
| A89890 | Pipe Laying | 2026-10-25 → 2027-01-30 (+97d) | 2026-11-04 → 2027-02-10 (+98d) |  | 38d → -45.02d |
| A89910 | Valve Chambers Civil Works | 2026-11-05 → 2027-02-10 (+97d) | 2026-11-16 → 2027-02-22 (+98d) |  | 38d → -45.02d |
| A89920 | Valve Installation | 2026-11-17 → 2027-02-22 (+97d) | 2026-11-28 → 2027-03-06 (+98d) |  | 38d → -45.02d |
| A89930 | Testing | 2026-11-29 → 2027-03-06 (+97d) | 2026-12-09 → 2027-03-17 (+98d) |  | 38d → -45.02d |
| A89940 | Backfilling | 2026-12-10 → 2027-03-17 (+97d) | 2026-12-21 → 2027-03-29 (+98d) |  | 38d → -45.02d |
| R113 | **Road 23** | 2026-10-29 → 2026-08-20 (-70d) | 2027-01-06 → 2027-03-10 (+63d) |  |  |
| A90320 | Road Crossing Works | 2026-11-22 → 2026-08-20 A (-94d) | 2026-12-02 → 2026-09-28 A (-65d) | 0% → 100% | 44d → none |
| A90310 | Pipe Laying | 2026-11-10 → 2026-09-15 A (-56d) | 2026-11-21 → 2027-02-03 (+74d) | 0% → 99% | 24d → -29.32d |

| ID | Task | Start | Finish | Duration | Complete | Total float |
| --- | --- | --- | --- | --- | --- | --- |
| A90360 | Backfilling | 2026-12-27 → 2026-09-15 A (-103d) | 2027-01-06 → 2027-03-10 (+63d) |  | 0% → 99% | 24d → -29.32d |
| A90370 | Trench Excavation | 2026-10-29 → 2026-09-15 A (-44d) | 2026-11-09 → 2027-02-03 (+86d) |  | 0% → 99% | 24d → -29.32d |
| A90330 | Valve Chambers Civil Works | 2026-11-22 → 2027-02-03 (+73d) | 2026-12-02 → 2027-02-15 (+75d) |  |  | 24d → -29.32d |
| A90340 | Valve Installation | 2026-12-03 → 2027-02-15 (+74d) | 2026-12-14 → 2027-02-27 (+75d) |  |  | 24d → -29.32d |
| A90350 | Testing | 2026-12-15 → 2027-02-27 (+74d) | 2026-12-26 → 2027-03-10 (+74d) |  |  | 24d → -29.32d |
| R11111 | **Road 25** | 2026-10-13 → 2026-08-20 (-54d) | 2026-12-21 → 2027-03-14 (+83d) |  |  |  |
| A90390 | Road Crossing Works | 2026-11-05 → 2026-08-20 A (-77d) | 2026-11-16 → 2026-09-28 A (-49d) |  | 0% → 100% | 58d → none |
| A90440 | Trench Excavation | 2026-10-13 → 2027-01-03 (+82d) | 2026-10-24 → 2027-01-14 (+82d) |  |  | 38d → -32.14d |
| A90380 | Pipe Laying | 2026-10-25 → 2027-01-14 (+81d) | 2026-11-04 → 2027-01-26 (+83d) |  |  | 38d → -32.14d |
| A90400 | Valve Chambers Civil Works | 2026-11-05 → 2027-01-26 (+82d) | 2026-11-16 → 2027-02-07 (+83d) |  |  | 38d → -32.14d |
| A90410 | Valve Installation | 2026-11-17 → 2027-02-07 (+82d) | 2026-11-28 → 2027-02-18 (+82d) |  |  | 38d → -32.14d |
| A90420 | Testing | 2026-11-29 → 2027-02-18 (+81d) | 2026-12-09 → 2027-03-02 (+83d) |  |  | 38d → -32.14d |
| A90430 | Backfilling | 2026-12-10 → 2027-03-02 (+82d) | 2026-12-21 → 2027-03-14 (+83d) |  |  | 38d → -32.14d |
| R13 | **Road 26** | 2026-11-17 → 2026-08-20 (-89d) | 2027-01-25 → 2027-02-08 (+14d) |  |  |  |
| A90460 | Road Crossing Works | 2026-12-10 → 2026-08-20 A (-112d) | 2026-12-21 → 2026-09-28 A (-84d) |  | 0% → 100% | 28d → none |
| A90450 | Pipe Laying | 2026-11-29 → 2026-09-15 A (-75d) | 2026-12-09 → 2027-01-03 (+25d) |  | 0% → 95% | 8d → -3.5d |
| A90500 | Backfilling | 2027-01-14 → 2026-09-15 A (-121d) | 2027-01-25 → 2027-02-08 (+14d) |  | 0% → 95% | 8d → -3.5d |
| A90510 | Trench Excavation | 2026-11-17 → 2026-09-15 A (-63d) | 2026-11-28 → 2027-01-03 (+36d) |  | 0% → 95% | 8d → -3.5d |
| A90470 | Valve Chambers Civil Works | 2026-12-10 → 2027-01-04 (+25d) | 2026-12-21 → 2027-01-14 (+24d) |  |  | 8d → -3.5d |
| A90480 | Valve Installation | 2026-12-22 → 2027-01-16 (+25d) | 2027-01-02 → 2027-01-26 (+24d) |  |  | 8d → -3.5d |
| A90490 | Testing | 2027-01-03 → 2027-01-27 (+24d) | 2027-01-13 → 2027-02-07 (+25d) |  |  | 8d → -3.5d |
| R12 | **Road 27** | 2026-10-04 → 2026-08-20 (-45d) | 2026-12-12 → 2027-02-06 (+56d) |  |  |  |
| A90530 | Road Crossing Works | 2026-10-27 → 2026-08-20 A (-68d) | 2026-11-07 → 2026-09-28 A (-40d) |  | 0% → 100% | 66d → none |
| A90520 | Pipe Laying | 2026-10-15 → 2026-09-15 A (-30d) | 2026-10-26 → 2027-01-02 (+68d) |  | 0% → 97% | 46d → -1.92d |
| A90570 | Backfilling | 2026-12-01 → 2026-09-15 A (-77d) | 2026-12-12 → 2027-02-06 (+56d) |  | 0% → 97% | 46d → -1.92d |
| A90580 | Trench Excavation | 2026-10-04 → 2026-09-15 A (-19d) | 2026-10-14 → 2027-01-02 (+80d) |  | 0% → 97% | 46d → -1.92d |
| A90540 | Valve Chambers Civil Works | 2026-10-27 → 2027-01-02 (+67d) | 2026-11-07 → 2027-01-13 (+67d) |  |  | 46d → -1.92d |
| A90550 | Valve Installation | 2026-11-08 → 2027-01-13 (+66d) | 2026-11-18 → 2027-01-25 (+68d) |  |  | 46d → -1.92d |
| A90560 | Testing | 2026-11-19 → 2027-01-25 (+67d) | 2026-11-30 → 2027-02-06 (+68d) |  |  | 46d → -1.92d |
| R111 | **Collector 2** | 2026-10-13 → 2026-08-20 (-54d) | 2026-12-21 → 2027-02-07 (+48d) |  |  |  |
| A90810 | Road Crossing Works | 2026-11-05 → 2026-08-20 A (-77d) | 2026-11-16 → 2026-09-28 A (-49d) |  | 0% → 100% | 58d → none |
| A90800 | Pipe Laying | 2026-10-25 → 2026-09-15 A (-40d) | 2026-11-04 → 2027-01-03 (+60d) |  | 0% → 97% | 38d → -2.56d |
| A90850 | Backfilling | 2026-12-10 → 2026-09-15 A (-86d) | 2026-12-21 → 2027-02-07 (+48d) |  | 0% → 97% | 38d → -2.56d |
| A90860 | Trench Excavation | 2026-10-13 → 2026-09-15 A (-28d) | 2026-10-24 → 2027-01-02 (+70d) |  | 0% → 97% | 38d → -2.56d |
| A90820 | Valve Chambers Civil Works | 2026-11-05 → 2027-01-03 (+59d) | 2026-11-16 → 2027-01-14 (+59d) |  |  | 38d → -2.56d |
| A90830 | Valve Installation | 2026-11-17 → 2027-01-14 (+58d) | 2026-11-28 → 2027-01-26 (+59d) |  |  | 38d → -2.56d |
| A90840 | Testing | 2026-11-29 → 2027-01-26 (+58d) | 2026-12-09 → 2027-02-07 (+60d) |  |  | 38d → -2.56d |
| R1112 | **Arterial 1** | 2026-10-22 → 2026-08-20 (-63d) | 2026-12-21 → 2027-02-24 (+65d) |  |  |  |
| A90880 | Road Crossing Works | 2026-11-15 → 2026-08-20 A (-87d) | 2026-11-25 → 2026-09-28 A (-58d) |  | 0% → 100% | 50d → none |
| A90870 | Pipe Laying | 2026-11-03 → 2026-09-15 A (-49d) | 2026-11-14 → 2027-01-18 (+65d) |  | 0% → 30% | 38d → -17.26d |
| A90930 | Trench Excavation | 2026-10-22 → 2026-09-15 A (-37d) | 2026-11-02 → 2027-01-10 (+69d) |  | 0% → 30% | 2d → -58.26d |
| A90890 | Valve Chambers Civil Works | 2026-11-15 → 2027-01-18 (+64d) | 2026-11-25 → 2027-01-30 (+66d) |  |  | 38d → -17.26d |
| A90900 | Valve Installation | 2026-11-26 → 2027-01-30 (+65d) | 2026-12-07 → 2027-02-10 (+65d) |  |  | 38d → -17.26d |
| A90910 | Testing | 2026-12-08 → 2027-02-10 (+64d) | 2026-12-09 → 2027-02-13 (+66d) |  |  | 38d → -17.26d |
| A90920 | Backfilling | 2026-12-10 → 2027-02-13 (+65d) | 2026-12-21 → 2027-02-24 (+65d) |  |  | 38d → -17.26d |
| R122 | **Arterial 2** | 2026-11-03 → 2026-08-20 (-75d) | 2027-01-11 → 2027-03-21 (+69d) |  |  |  |
| A90740 | Road Crossing Works | 2026-11-26 → 2026-08-20 A (-98d) | 2026-12-07 → 2026-09-28 A (-70d) |  | 0% → 100% | 40d → none |
| A90790 | Trench Excavation | 2026-11-03 → 2027-01-10 (+68d) | 2026-11-14 → 2027-01-21 (+68d) |  |  | 2d → -58.26d |
| A90730 | Pipe Laying | 2026-11-15 → 2027-01-21 (+67d) | 2026-11-25 → 2027-02-02 (+69d) |  |  | 20d → -38.26d |
| A90750 | Valve Chambers Civil Works | 2026-11-26 → 2027-02-02 (+68d) | 2026-12-07 → 2027-02-14 (+69d) |  |  | 20d → -38.26d |
| A90760 | Valve Installation | 2026-12-08 → 2027-02-14 (+68d) | 2026-12-19 → 2027-02-25 (+68d) |  |  | 20d → -38.26d |
| A90770 | Testing | 2026-12-20 → 2027-02-25 (+67d) | 2026-12-30 → 2027-03-09 (+69d) |  |  | 20d → -38.26d |
| A90780 | Backfilling | 2026-12-31 → 2027-03-09 (+68d) | 2027-01-11 → 2027-03-21 (+69d) |  |  | 20d → -38.26d |
| R111111 | **ROUND ABOUT 1** | 2026-11-15 → 2026-08-20 (-87d) | 2027-01-23 → 2027-04-01 (+68d) |  |  |  |
| A90600 | Road Crossing Works | 2026-12-08 → 2026-08-20 A (-110d) | 2026-12-19 → 2026-09-28 A (-82d) |  | 0% → 100% | 30d → none |
| A90650 | Trench Excavation | 2026-11-15 → 2027-01-21 (+67d) | 2026-11-25 → 2027-02-02 (+69d) |  |  | 2d → -58.26d |
| A90590 | Pipe Laying | 2026-11-26 → 2027-02-02 (+68d) | 2026-12-07 → 2027-02-14 (+69d) |  |  | 10d → -48.26d |
| A90610 | Valve Chambers Civil Works | 2026-12-08 → 2027-02-14 (+68d) | 2026-12-19 → 2027-02-25 (+68d) |  |  | 10d → -48.26d |
| A90620 | Valve Installation | 2026-12-20 → 2027-02-25 (+67d) | 2026-12-30 → 2027-03-09 (+69d) |  |  | 10d → -48.26d |
| A90630 | Testing | 2026-12-31 → 2027-03-09 (+68d) | 2027-01-11 → 2027-03-21 (+69d) |  |  | 10d → -48.26d |
| A90640 | Backfilling | 2027-01-12 → 2027-03-21 (+68d) | 2027-01-23 → 2027-04-01 (+68d) |  |  | 10d → -48.26d |
| R131 | **ROUND ABOUT 2** | 2026-11-26 → 2026-08-20 (-98d) | 2027-02-01 → 2027-04-13 (+71d) |  |  |  |
| A90670 | Road Crossing Works | 2026-12-20 → 2026-08-20 A (-122d) | 2026-12-30 → 2026-09-28 A (-93d) |  | 0% → 100% | 22d → none |
| A90720 | Trench Excavation | 2026-11-26 → 2027-02-02 (+68d) | 2026-12-07 → 2027-02-14 (+69d) |  |  | 2d → -58.26d |
| A90660 | Pipe Laying | 2026-12-08 → 2027-02-14 (+68d) | 2026-12-19 → 2027-02-25 (+68d) |  |  | 2d → -58.26d |
| A90680 | Valve Chambers Civil Works | 2026-12-20 → 2027-02-25 (+67d) | 2026-12-30 → 2027-03-09 (+69d) |  |  | 2d → -58.26d |
| A90690 | Valve Installation | 2026-12-31 → 2027-03-09 (+68d) | 2027-01-11 → 2027-03-21 (+69d) |  |  | 2d → -58.26d |
| A90700 | Testing | 2027-01-12 → 2027-03-21 (+68d) | 2027-01-23 → 2027-04-01 (+68d) |  |  | 2d → -58.26d |
| A90710 | Backfilling | 2027-01-24 → 2027-04-01 (+67d) | 2027-02-01 → 2027-04-13 (+71d) | 8d → 10d |  | 2d → -58.26d |
| ROL | **ROAD LIGHING** | 2027-06-30 → 2026-09-15 (-288d) | 2027-11-20 → 2027-07-10 (-133d) |  |  |  |

| ID | Task | Start | Finish | Complete | Total float | Predecessors |
| --- | --- | --- | --- | --- | --- | --- |
| 1 | **PSS 8714 - loop 01 Zone B** | 2027-06-30 → 2026-09-15 (-288d) | 2027-11-20 → 2027-05-26 (-178d) |  |  |  |
| A86410 | Trenching for lighting network | 2027-06-30 → 2026-09-15 A (-288d) | 2027-07-11 → 2027-05-08 (-64d) | 0% → 95% | 5d → 59.8d |  |
| A86420 | Installation of lighting poles & luminaires | 2027-11-04 → 2026-09-15 A (-415d) | 2027-11-20 → 2027-05-20 (-184d) | 0% → 60% | 1d → 167.7d | A86430 SS+6d, A86430 FF+6d, A10800, A10810 → A86430 SS+6d, A86430 FF+6d |
| A86430 | Installation of lighting poles foundations | 2027-08-26 → 2026-09-15 A (-345d) | 2027-09-11 → 2027-05-13 (-121d) | 0% → 60% | 55d → 167.7d | A86440 SS+6d, A10810 → A86440 SS+6d |
| A86440 | LV cable laying & termination / Backfilling | 2027-07-11 → 2026-09-15 A (-299d) | 2027-07-24 → 2027-05-08 (-77d) | 0% → 95% | 32d → 97.7d | A86410 SS+6d, A10730, A10740, A10760 → A86410 SS+6d |
| A86450 | Street lighting sub-station construction & installation | 2027-07-25 → 2027-05-08 (-78d) | 2027-08-11 → 2027-05-26 (-77d) |  | 32d → 97.7d | A86440, A10750 → A86440 |
| 4 | **PSS 8714 - loop 02 Zone B** | 2027-07-12 → 2027-05-08 (-65d) | 2027-11-20 → 2027-06-16 (-157d) |  |  |  |
| A86460 | Trenching for lighting network | 2027-07-12 → 2027-05-08 (-65d) | 2027-07-22 → 2027-05-19 (-64d) |  | 5d → 59.8d |  |
| A86490 | LV cable laying & termination / Backfilling | 2027-07-19 → 2027-05-15 (-65d) | 2027-08-01 → 2027-05-29 (-64d) |  | 25d → 79.8d | A86460 SS+6d, A10730, A10740, A10760 → A86460 SS+6d |
| A86480 | Installation of lighting poles foundations | 2027-08-26 → 2027-05-22 (-96d) | 2027-09-11 → 2027-06-07 (-96d) |  | 55d → 146.8d | A86490 SS+6d, A10810 → A86490 SS+6d |
| A86470 | Installation of lighting poles & luminaires | 2027-11-04 → 2027-05-29 (-159d) | 2027-11-20 → 2027-06-14 (-159d) |  | 1d → 146.8d | A86480 SS+6d, A86480 FF+6d, A10800, A10810 → A86480 SS+6d, A86480 FF+6d |
| A86500 | Street lighting sub-station construction & installation | 2027-08-02 → 2027-05-29 (-65d) | 2027-08-19 → 2027-06-16 (-64d) |  | 25d → 79.8d | A86490, A10750 → A86490 |
| 5 | **PSS 8714 - loop 03 Zone B** | 2027-07-24 → 2027-05-19 (-66d) | 2027-11-20 → 2027-06-28 (-145d) |  |  |  |
| A86510 | Trenching for lighting network | 2027-07-24 → 2027-05-19 (-66d) | 2027-08-03 → 2027-05-31 (-64d) |  | 5d → 59.8d |  |
| A86540 | LV cable laying & termination / Backfilling | 2027-07-31 → 2027-05-26 (-66d) | 2027-08-12 → 2027-06-09 (-64d) |  | 15d → 69.8d | A86510 SS+6d, A10730, A10740, A10760 → A86510 SS+6d |
| A86530 | Installation of lighting poles foundations | 2027-08-26 → 2027-06-02 (-85d) | 2027-09-11 → 2027-06-19 (-84d) |  | 55d → 136.8d | A86540 SS+6d, A10810 → A86540 SS+6d |
| A86520 | Installation of lighting poles & luminaires | 2027-11-04 → 2027-06-09 (-148d) | 2027-11-20 → 2027-06-26 (-147d) |  | 1d → 136.8d | A86530 SS+6d, A86530 FF+6d, A10800, A10810 → A86530 SS+6d, A86530 FF+6d |
| A86550 | Street lighting sub-station construction & installation | 2027-08-14 → 2027-06-09 (-66d) | 2027-08-31 → 2027-06-28 (-64d) |  | 15d → 69.8d | A86540, A10750 → A86540 |
| 6 | **PSS 8714 - loop 04 Zone B** | 2027-08-04 → 2027-05-31 (-65d) | 2027-11-20 → 2027-07-10 (-133d) |  |  |  |
| A86560 | Trenching for lighting network | 2027-08-04 → 2027-05-31 (-65d) | 2027-08-15 → 2027-06-12 (-64d) |  | 5d → 59.8d |  |
| A86590 | LV cable laying & termination / Backfilling | 2027-08-11 → 2027-06-07 (-65d) | 2027-08-24 → 2027-06-21 (-64d) |  | 5d → 59.8d | A86560 SS+6d, A86560 FF+6d, A10730, A10740, A10760 → A86560 SS+6d, A86560 FF+6d |
| A86580 | Installation of lighting poles foundations | 2027-08-26 → 2027-06-14 (-73d) | 2027-09-11 → 2027-06-30 (-73d) |  | 55d → 126.8d | A86590 SS+6d, A10810 → A86590 SS+6d |
| A86570 | Installation of lighting poles & luminaires | 2027-11-04 → 2027-06-21 (-136d) | 2027-11-20 → 2027-07-07 (-136d) |  | 1d → 126.8d | A86580 SS+6d, A86580 FF+6d, A10800, A10810 → A86580 SS+6d, A86580 FF+6d |
| A86600 | Street lighting sub-station construction & installation | 2027-08-25 → 2027-06-21 (-65d) | 2027-09-12 → 2027-07-10 (-64d) |  | 5d → 59.8d | A86590, A10750 → A86590 |
| 1 | **TELECOMMUNICATION** | 2026-09-24 → 2026-08-20 (-35d) | 2027-02-02 → 2027-03-08 (+34d) |  |  |  |
| RR18 | **Road 18** | 2026-09-24 → 2026-08-20 (-35d) | 2027-02-02 → 2027-03-08 (+34d) |  |  |  |
| A91860 | Road Crossing Encasement | 2026-10-27 → 2026-08-20 A (-68d) | 2026-11-11 → 2026-09-28 A (-44d) | 0% → 100% | 44d → none |  |
| A91840 | Excavation | 2026-09-24 → 2027-01-02 (+100d) | 2026-10-10 → 2027-01-18 (+100d) |  | 44d → -27.02d | A63920, A58910 → A63920, A58910, A11110 |
| A91850 | Duct Jointing & Laying | 2026-10-11 → 2027-01-18 (+99d) | 2026-10-26 → 2027-02-03 (+100d) |  | 44d → -27.02d |  |
| A91870 | Manhole Civil Works | 2027-01-02 → 2027-02-03 (+32d) | 2027-01-17 → 2027-02-20 (+34d) |  | 1d → -27.02d | A91860, A10250, A11110 → A91860 |
| A91880 | Backfilling & Compaction | 2027-01-18 → 2027-02-20 (+33d) | 2027-02-02 → 2027-03-08 (+34d) |  | 1d → -27.02d |  |
| R19 | **Road 19** | 2026-09-24 → 2026-08-20 (-35d) | 2027-02-02 → 2027-03-08 (+34d) |  |  |  |
| A91910 | Road Crossing Encasement | 2026-10-27 → 2026-08-20 A (-68d) | 2026-11-11 → 2026-09-28 A (-44d) | 0% → 100% | 44d → none |  |
| A91890 | Excavation | 2026-09-24 → 2027-01-02 (+100d) | 2026-10-10 → 2027-01-18 (+100d) |  | 44d → -27.02d | A63920, A58910 → A63920, A58910, A11110 |
| A91900 | Duct Jointing & Laying | 2026-10-11 → 2027-01-18 (+99d) | 2026-10-26 → 2027-02-03 (+100d) |  | 44d → -27.02d |  |
| A91920 | Manhole Civil Works | 2027-01-02 → 2027-02-03 (+32d) | 2027-01-17 → 2027-02-20 (+34d) |  | 1d → -27.02d | A91910, A10250, A11110 → A91910 |
| A91930 | Backfilling & Compaction | 2027-01-18 → 2027-02-20 (+33d) | 2027-02-02 → 2027-03-08 (+34d) |  | 1d → -27.02d |  |
| R20 | **Road 20** | 2026-09-24 → 2026-08-20 (-35d) | 2027-02-02 → 2027-03-08 (+34d) |  |  |  |
| A91960 | Road Crossing Encasement | 2026-10-27 → 2026-08-20 A (-68d) | 2026-11-11 → 2026-09-28 A (-44d) | 0% → 100% | 44d → none |  |
| A91940 | Excavation | 2026-09-24 → 2027-01-02 (+100d) | 2026-10-10 → 2027-01-18 (+100d) |  | 44d → -27.02d | A63920, A58910 → A63920, A58910, A11110 |
| A91950 | Duct Jointing & Laying | 2026-10-11 → 2027-01-18 (+99d) | 2026-10-26 → 2027-02-03 (+100d) |  | 44d → -27.02d |  |
| A91970 | Manhole Civil Works | 2027-01-02 → 2027-02-03 (+32d) | 2027-01-17 → 2027-02-20 (+34d) |  | 1d → -27.02d | A91960, A10250, A11110 → A91960 |
| A91980 | Backfilling & Compaction | 2027-01-18 → 2027-02-20 (+33d) | 2027-02-02 → 2027-03-08 (+34d) |  | 1d → -27.02d |  |
| 21 | **Road 21** | 2026-09-24 → 2026-08-20 (-35d) | 2027-02-02 → 2027-03-08 (+34d) |  |  |  |
| A92060 | Road Crossing Encasement | 2026-10-27 → 2026-08-20 A (-68d) | 2026-11-11 → 2026-09-28 A (-44d) | 0% → 100% | 44d → none |  |
| A92040 | Excavation | 2026-09-24 → 2027-01-02 (+100d) | 2026-10-10 → 2027-01-18 (+100d) |  | 44d → -27.02d | A63920, A58910 → A63920, A58910, A11110 |
| A92050 | Duct Jointing & Laying | 2026-10-11 → 2027-01-18 (+99d) | 2026-10-26 → 2027-02-03 (+100d) |  | 44d → -27.02d |  |
| A92070 | Manhole Civil Works | 2027-01-02 → 2027-02-03 (+32d) | 2027-01-17 → 2027-02-20 (+34d) |  | 1d → -27.02d | A92060, A10250, A11110 → A92060 |
| A92080 | Backfilling & Compaction | 2027-01-18 → 2027-02-20 (+33d) | 2027-02-02 → 2027-03-08 (+34d) |  | 1d → -27.02d |  |
| R22 | **Road 22** | 2026-09-24 → 2026-08-20 (-35d) | 2027-02-02 → 2027-03-08 (+34d) |  |  |  |
| A92010 | Road Crossing Encasement | 2026-10-27 → 2026-08-20 A (-68d) | 2026-11-11 → 2026-09-28 A (-44d) | 0% → 100% | 44d → none |  |
| A91990 | Excavation | 2026-09-24 → 2027-01-02 (+100d) | 2026-10-10 → 2027-01-18 (+100d) |  | 44d → -27.02d | A63920, A58910 → A63920, A58910, A11110 |
| A92000 | Duct Jointing & Laying | 2026-10-11 → 2027-01-18 (+99d) | 2026-10-26 → 2027-02-03 (+100d) |  | 44d → -27.02d |  |
| A92020 | Manhole Civil Works | 2027-01-02 → 2027-02-03 (+32d) | 2027-01-17 → 2027-02-20 (+34d) |  | 1d → -27.02d | A92010, A10250, A11110 → A92010 |
| A92030 | Backfilling & Compaction | 2027-01-18 → 2027-02-20 (+33d) | 2027-02-02 → 2027-03-08 (+34d) |  | 1d → -27.02d |  |
| R23 | **Road 23** | 2026-09-24 → 2026-08-20 (-35d) | 2027-02-02 → 2027-03-08 (+34d) |  |  |  |
| A92110 | Road Crossing Encasement | 2026-10-27 → 2026-08-20 A (-68d) | 2026-11-11 → 2026-09-28 A (-44d) | 0% → 100% | 44d → none |  |
| A92090 | Excavation | 2026-09-24 → 2027-01-02 (+100d) | 2026-10-10 → 2027-01-18 (+100d) |  | 44d → -27.02d | A63920, A58910 → A63920, A58910, A11110 |
| A92100 | Duct Jointing & Laying | 2026-10-11 → 2027-01-18 (+99d) | 2026-10-26 → 2027-02-03 (+100d) |  | 44d → -27.02d |  |
| A92120 | Manhole Civil Works | 2027-01-02 → 2027-02-03 (+32d) | 2027-01-17 → 2027-02-20 (+34d) |  | 1d → -27.02d | A92110, A10250, A11110 → A92110 |
| A92130 | Backfilling & Compaction | 2027-01-18 → 2027-02-20 (+33d) | 2027-02-02 → 2027-03-08 (+34d) |  | 1d → -27.02d |  |
| R24 | **Road 24** | 2026-09-24 → 2026-08-20 (-35d) | 2027-02-02 → 2027-03-08 (+34d) |  |  |  |
| A92160 | Road Crossing Encasement | 2026-10-27 → 2026-08-20 A (-68d) | 2026-11-11 → 2026-09-28 A (-44d) | 0% → 100% | 44d → none |  |
| A92140 | Excavation | 2026-09-24 → 2027-01-02 (+100d) | 2026-10-10 → 2027-01-18 (+100d) |  | 44d → -27.02d | A63920, A58910 → A63920, A58910, A11110 |
| A92150 | Duct Jointing & Laying | 2026-10-11 → 2027-01-18 (+99d) | 2026-10-26 → 2027-02-03 (+100d) |  | 44d → -27.02d |  |
| A92170 | Manhole Civil Works | 2027-01-02 → 2027-02-03 (+32d) | 2027-01-17 → 2027-02-20 (+34d) |  | 1d → -27.02d | A92160, A10250, A11110 → A92160 |
| A92180 | Backfilling & Compaction | 2027-01-18 → 2027-02-20 (+33d) | 2027-02-02 → 2027-03-08 (+34d) |  | 1d → -27.02d |  |
| R25 | **Road 25** | 2026-09-24 → 2026-08-20 (-35d) | 2027-02-02 → 2027-03-08 (+34d) |  |  |  |
| A92210 | Road Crossing Encasement | 2026-10-27 → 2026-08-20 A (-68d) | 2026-11-11 → 2026-09-28 A (-44d) | 0% → 100% | 44d → none |  |
| A92190 | Excavation | 2026-09-24 → 2027-01-02 (+100d) | 2026-10-10 → 2027-01-18 (+100d) |  | 44d → -27.02d | A63920, A58910 → A63920, A58910, A11110 |

| ID | Task | Start | Finish | Duration | Complete | Total float | Predecessors |
| --- | --- | --- | --- | --- | --- | --- | --- |
| A92200 | Duct Jointing & Laying | 2026-10-11 → 2027-01-18 (+99d) | 2026-10-26 → 2027-02-03 (+100d) |  |  | 44d → -27.02d |  |
| A92220 | Manhole Civil Works | 2027-01-02 → 2027-02-03 (+32d) | 2027-01-17 → 2027-02-20 (+34d) |  |  | 1d → -27.02d | A92210, A10250, A11110 → A92210 |
| A92230 | Backfilling & Compaction | 2027-01-18 → 2027-02-20 (+33d) | 2027-02-02 → 2027-03-08 (+34d) |  |  | 1d → -27.02d |  |
| R26 | **Road 26** | 2026-09-24 → 2026-08-20 (-35d) | 2027-02-02 → 2027-03-08 (+34d) |  |  |  |  |
| A92260 | Road Crossing Encasement | 2026-10-27 → 2026-08-20 A (-68d) | 2026-11-11 → 2026-09-28 A (-44d) |  | 0% → 100% | 44d → none |  |
| A92240 | Excavation | 2026-09-24 → 2027-01-02 (+100d) | 2026-10-10 → 2027-01-18 (+100d) |  |  | 44d → -27.02d | A63920, A58910 → A63920, A58910, A11110 |
| A92250 | Duct Jointing & Laying | 2026-10-11 → 2027-01-18 (+99d) | 2026-10-26 → 2027-02-03 (+100d) |  |  | 44d → -27.02d |  |
| A92270 | Manhole Civil Works | 2027-01-02 → 2027-02-03 (+32d) | 2027-01-17 → 2027-02-20 (+34d) |  |  | 1d → -27.02d | A92260, A10250, A11110 → A92260 |
| A92280 | Backfilling & Compaction | 2027-01-18 → 2027-02-20 (+33d) | 2027-02-02 → 2027-03-08 (+34d) |  |  | 1d → -27.02d |  |
| R27 | **Road 27** | 2026-09-24 → 2026-08-20 (-35d) | 2027-02-02 → 2027-03-08 (+34d) |  |  |  |  |
| A92310 | Road Crossing Encasement | 2026-10-27 → 2026-08-20 A (-68d) | 2026-11-11 → 2026-09-28 A (-44d) |  | 0% → 100% | 44d → none |  |
| A92290 | Excavation | 2026-09-24 → 2027-01-02 (+100d) | 2026-10-10 → 2027-01-18 (+100d) |  |  | 44d → -27.02d | A63920, A58910 → A63920, A58910, A11110 |
| A92300 | Duct Jointing & Laying | 2026-10-11 → 2027-01-18 (+99d) | 2026-10-26 → 2027-02-03 (+100d) |  |  | 44d → -27.02d |  |
| A92320 | Manhole Civil Works | 2027-01-02 → 2027-02-03 (+32d) | 2027-01-17 → 2027-02-20 (+34d) |  |  | 1d → -27.02d | A92310, A10250, A11110 → A92310 |
| A92330 | Backfilling & Compaction | 2027-01-18 → 2027-02-20 (+33d) | 2027-02-02 → 2027-03-08 (+34d) |  |  | 1d → -27.02d |  |
| CO2 | **Collector 2** | 2026-09-24 → 2026-08-20 (-35d) | 2027-02-02 → 2027-03-08 (+34d) |  |  |  |  |
| A92360 | Road Crossing Encasement | 2026-10-27 → 2026-08-20 A (-68d) | 2026-11-11 → 2026-09-28 A (-44d) |  | 0% → 100% | 44d → none |  |
| A92340 | Excavation | 2026-09-24 → 2027-01-02 (+100d) | 2026-10-10 → 2027-01-18 (+100d) |  |  | 44d → -27.02d | A63920, A58910 → A63920, A58910, A11110 |
| A92350 | Duct Jointing & Laying | 2026-10-11 → 2027-01-18 (+99d) | 2026-10-26 → 2027-02-03 (+100d) |  |  | 44d → -27.02d |  |
| A92370 | Manhole Civil Works | 2027-01-02 → 2027-02-03 (+32d) | 2027-01-17 → 2027-02-20 (+34d) |  |  | 1d → -27.02d | A92360, A10250, A11110 → A92360 |
| A92380 | Backfilling & Compaction | 2027-01-18 → 2027-02-20 (+33d) | 2027-02-02 → 2027-03-08 (+34d) |  |  | 1d → -27.02d |  |
| ART1 | **Arterial 1** | 2026-09-24 → 2026-08-20 (-35d) | 2027-02-02 → 2027-03-08 (+34d) |  |  |  |  |
| A92410 | Road Crossing Encasement | 2026-10-27 → 2026-08-20 A (-68d) | 2026-11-11 → 2026-09-28 A (-44d) |  | 0% → 100% | 44d → none |  |
| A92390 | Excavation | 2026-09-24 → 2027-01-02 (+100d) | 2026-10-10 → 2027-01-18 (+100d) |  |  | 44d → -27.02d | A63920, A58910 → A63920, A58910, A11110 |
| A92400 | Duct Jointing & Laying | 2026-10-11 → 2027-01-18 (+99d) | 2026-10-26 → 2027-02-03 (+100d) |  |  | 44d → -27.02d |  |
| A92420 | Manhole Civil Works | 2027-01-02 → 2027-02-03 (+32d) | 2027-01-17 → 2027-02-20 (+34d) |  |  | 1d → -27.02d | A92410, A10250, A11110 → A92410 |
| A92430 | Backfilling & Compaction | 2027-01-18 → 2027-02-20 (+33d) | 2027-02-02 → 2027-03-08 (+34d) |  |  | 1d → -27.02d |  |
| ART2 | **Arterial 2** | 2026-09-24 → 2026-08-20 (-35d) | 2027-02-02 → 2027-03-08 (+34d) |  |  |  |  |
| A92460 | Road Crossing Encasement | 2026-10-27 → 2026-08-20 A (-68d) | 2026-11-11 → 2026-09-28 A (-44d) |  | 0% → 100% | 44d → none |  |
| A92440 | Excavation | 2026-09-24 → 2027-01-02 (+100d) | 2026-10-10 → 2027-01-18 (+100d) |  |  | 44d → -27.02d | A63920, A58910 → A63920, A58910, A11110 |
| A92450 | Duct Jointing & Laying | 2026-10-11 → 2027-01-18 (+99d) | 2026-10-26 → 2027-02-03 (+100d) |  |  | 44d → -27.02d |  |
| A92470 | Manhole Civil Works | 2027-01-02 → 2027-02-03 (+32d) | 2027-01-17 → 2027-02-20 (+34d) |  |  | 1d → -27.02d | A92460, A10250, A11110 → A92460 |
| A92480 | Backfilling & Compaction | 2027-01-18 → 2027-02-20 (+33d) | 2027-02-02 → 2027-03-08 (+34d) |  |  | 1d → -27.02d |  |
| RON1 | **ROUND ABOUT 1** | 2026-09-24 → 2026-08-20 (-35d) | 2027-02-02 → 2027-03-08 (+34d) |  |  |  |  |
| A92510 | Road Crossing Encasement | 2026-10-27 → 2026-08-20 A (-68d) | 2026-11-11 → 2026-09-28 A (-44d) |  | 0% → 100% | 44d → none |  |
| A92490 | Excavation | 2026-09-24 → 2027-01-02 (+100d) | 2026-10-10 → 2027-01-18 (+100d) |  |  | 44d → -27.02d | A63920, A58910 → A63920, A58910, A11110 |
| A92500 | Duct Jointing & Laying | 2026-10-11 → 2027-01-18 (+99d) | 2026-10-26 → 2027-02-03 (+100d) |  |  | 44d → -27.02d |  |
| A92520 | Manhole Civil Works | 2027-01-02 → 2027-02-03 (+32d) | 2027-01-17 → 2027-02-20 (+34d) |  |  | 1d → -27.02d | A92510, A10250, A11110 → A92510 |
| A92530 | Backfilling & Compaction | 2027-01-18 → 2027-02-20 (+33d) | 2027-02-02 → 2027-03-08 (+34d) |  |  | 1d → -27.02d |  |
| RON2 | **ROUND ABOUT 2** | 2026-09-24 → 2026-08-20 (-35d) | 2027-02-02 → 2027-03-08 (+34d) |  |  |  |  |
| A92560 | Road Crossing Encasement | 2026-10-27 → 2026-08-20 A (-68d) | 2026-11-11 → 2026-09-28 A (-44d) |  | 0% → 100% | 44d → none |  |
| A92540 | Excavation | 2026-09-24 → 2027-01-02 (+100d) | 2026-10-10 → 2027-01-18 (+100d) |  |  | 44d → -27.02d | A63920, A58910 → A63920, A58910, A11110 |
| A92550 | Duct Jointing & Laying | 2026-10-11 → 2027-01-18 (+99d) | 2026-10-26 → 2027-02-03 (+100d) |  |  | 44d → -27.02d |  |
| A92570 | Manhole Civil Works | 2027-01-02 → 2027-02-03 (+32d) | 2027-01-17 → 2027-02-20 (+34d) |  |  | 1d → -27.02d | A92560, A10250, A11110 → A92560 |
| A92580 | Backfilling & Compaction | 2027-01-18 → 2027-02-20 (+33d) | 2027-02-02 → 2027-03-08 (+34d) |  |  | 1d → -27.02d |  |
| EXR | **EX ROAD** | 2026-09-24 → 2026-08-20 (-35d) | 2027-02-02 → 2027-03-08 (+34d) |  |  |  |  |
| A92610 | Road Crossing Encasement | 2026-10-27 → 2026-08-20 A (-68d) | 2026-11-11 → 2026-09-28 A (-44d) |  | 0% → 100% | 44d → none |  |
| A92590 | Excavation | 2026-09-24 → 2027-01-02 (+100d) | 2026-10-10 → 2027-01-18 (+100d) |  |  | 44d → -27.02d | A63920, A58910 → A63920, A58910, A11110 |
| A92600 | Duct Jointing & Laying | 2026-10-11 → 2027-01-18 (+99d) | 2026-10-26 → 2027-02-03 (+100d) |  |  | 44d → -27.02d |  |
| A92620 | Manhole Civil Works | 2027-01-02 → 2027-02-03 (+32d) | 2027-01-17 → 2027-02-20 (+34d) |  |  | 1d → -27.02d | A92610, A10250, A11110 → A92610 |
| A92630 | Backfilling & Compaction | 2027-01-18 → 2027-02-20 (+33d) | 2027-02-02 → 2027-03-08 (+34d) |  |  | 1d → -27.02d |  |
| RW | **ROADS WORK** | 2026-07-28 → 2026-08-15 (+18d) | 2027-07-19 → 2027-05-23 (-57d) |  |  |  |  |
| R18 | **Road 18** | 2026-07-28 → 2026-08-15 (+18d) | 2027-06-07 → 2027-04-13 (-55d) |  |  |  |  |
| AGG | **Aggregate Base Course** | 2026-07-28 → 2026-08-15 (+18d) | 2026-07-30 → 2026-09-20 (+52d) |  |  |  |  |
| A62750 | Aggregate base course | 2026-07-28 → 2026-08-15 A (+18d) | 2026-07-30 → 2026-09-20 A (+52d) |  | 0% → 100% | 0d → none |  |
| 2 | **Bituminous Construction** | 2026-08-01 → 2026-08-15 (+14d) | 2026-08-03 → 2026-09-20 (+48d) |  |  |  |  |
| A62760 | Bituminous base course (Grading I - Class A) | 2026-08-01 → 2026-08-15 A (+14d) | 2026-08-03 → 2026-09-20 A (+48d) |  | 0% → 100% | 51d → none | A62750 → A62750, A62800 |
| 3 | **Asphalt Wearing Course** | 2027-02-28 → 2027-04-03 (+34d) | 2027-03-02 → 2027-04-04 (+33d) |  |  |  |  |
| A62770 | Bituminous concrete wearing course | 2027-02-28 → 2027-04-03 (+34d) | 2027-03-02 → 2027-04-04 (+33d) | 3d → 1d |  | 1d → 10.3d | A62760, A56680 SS, A4825 → A62760, A58920 |
| 4 | **Precast Concrete Curb** | 2027-05-26 → 2026-08-29 (-270d) | 2027-05-29 → 2026-12-23 (-157d) |  |  |  |  |
| A62780 | Concrete curb, Type (K1A) | 2027-05-26 → 2026-08-29 A (-270d) | 2027-05-26 → 2026-12-22 (-155d) |  | 0% → 27% | 128d → -70.59d | A62750, A62770, A10270 → A62750 |
| A62790 | Concrete curb, Type (K1B) | 2027-05-27 → 2026-08-29 A (-271d) | 2027-05-27 → 2026-12-22 (-156d) |  | 0% → 27% | 128d → -70.59d | A62780, A10270 → A62780 |
| A62800 | Concrete curb, Type (K2) | 2027-05-29 → 2026-08-29 A (-273d) | 2027-05-29 → 2026-12-23 (-157d) |  | 0% → 27% | 128d → -70.59d | A62790, A10270 → A62790 |
| 5 | **Pavement Markings** | 2027-05-30 → 2027-04-04 (-56d) | 2027-05-31 → 2027-04-06 (-55d) |  |  |  |  |
| A62810 | Retroreflective Thermoplastic White Traffic lines | 2027-05-30 → 2027-04-04 (-56d) | 2027-05-30 → 2027-04-05 (-55d) |  |  | 128d → 10.3d |  |
| A62820 | Retroreflective Thermoplastic Yellow Traffic lines | 2027-05-31 → 2027-04-05 (-56d) | 2027-05-31 → 2027-04-06 (-55d) |  |  | 128d → 10.3d |  |
| 6 | **Traffic Signage** | 2027-06-01 → 2027-04-06 (-56d) | 2027-06-07 → 2027-04-13 (-55d) |  |  |  |  |
| A62830 | Traffic signs, ground mounted, 1 Sheet Alumenium, (breakaway) Single post | 2027-06-01 → 2027-04-06 (-56d) | 2027-06-01 → 2027-04-07 (-55d) |  |  | 128d → 10.3d |  |
| A62840 | Traffic signs, ground mounted, 2 Sheet Alumenium, (breakaway) Single post | 2027-06-02 → 2027-04-07 (-56d) | 2027-06-02 → 2027-04-08 (-55d) |  |  | 128d → 10.3d |  |
| A62850 | Traffic signs, ground mounted, Sheet Alumenium, (breakaway) Double post | 2027-06-03 → 2027-04-08 (-56d) | 2027-06-03 → 2027-04-10 (-54d) |  |  | 128d → 10.3d |  |

| ID | Task | Start | Finish | Duration | Complete | Total float | Predecessors |
| --- | --- | --- | --- | --- | --- | --- | --- |
| A62860 | Retroreflective raised pavement markers (Type A) | 2027-06-05 → 2027-04-10 (-56d) | 2027-06-05 → 2027-04-11 (-55d) |  |  | 140d → 187.3d |  |
| A62870 | Ceramic raised pavement markers | 2027-06-06 → 2027-04-11 (-56d) | 2027-06-06 → 2027-04-12 (-55d) |  |  | 140d → 187.3d |  |
| A62880 | Solar powered lighting cateyes pavement markers | 2027-06-07 → 2027-04-12 (-56d) | 2027-06-07 → 2027-04-13 (-55d) |  |  | 153d → 200.3d |  |
| R19 | **Road 19** | 2026-08-01 → 2026-08-15 (+14d) | 2027-06-07 → 2027-04-14 (-54d) |  |  |  |  |
| AGG | **Aggregate Base Course** | 2026-08-01 → 2026-08-15 (+14d) | 2026-08-04 → 2026-09-20 (+47d) |  |  |  |  |
| A64650 | Aggregate base course | 2026-08-01 → 2026-08-15 A (+14d) | 2026-08-04 → 2026-09-20 A (+47d) |  | 0% → 100% | 0d → none |  |
| 2 | **Bituminous Construction** | 2026-08-05 → 2026-08-15 (+10d) | 2026-08-09 → 2026-09-20 (+42d) |  |  |  |  |
| A64660 | Bituminous base course (Grading I - Class A) | 2026-08-05 → 2026-08-15 A (+10d) | 2026-08-09 → 2026-09-20 A (+42d) |  | 0% → 100% | 46d → none | A64650 → A64650, A64700 |
| 3 | **Asphalt Wearing Course** | 2027-03-03 → 2027-04-04 (+32d) | 2027-03-07 → 2027-04-05 (+29d) |  |  |  |  |
| A64670 | Bituminous concrete wearing course | 2027-03-03 → 2027-04-04 (+32d) | 2027-03-07 → 2027-04-05 (+29d) | 4d → 1d |  | 1d → 48.3d |  |
| 4 | **Precast Concrete Curb** | 2027-05-26 → 2026-08-29 (-270d) | 2027-05-29 → 2026-12-23 (-157d) |  |  |  |  |
| A64680 | Concrete curb, Type (K1A) | 2027-05-26 → 2026-08-29 A (-270d) | 2027-05-26 → 2026-12-22 (-155d) |  | 0% → 16% | 128d → -70.92d | A64650, A64670, A10270 → A64650 |
| A64690 | Concrete curb, Type (K1B) | 2027-05-27 → 2026-08-29 A (-271d) | 2027-05-27 → 2026-12-23 (-155d) |  | 0% → 16% | 128d → -70.92d | A64680, A10270 → A64680 |
| A64700 | Concrete curb, Type (K2) | 2027-05-29 → 2026-08-29 A (-273d) | 2027-05-29 → 2026-12-23 (-157d) |  | 0% → 16% | 128d → -70.92d | A64690, A10270 → A64690 |
| 5 | **Pavement Markings** | 2027-05-30 → 2027-04-05 (-55d) | 2027-05-31 → 2027-04-07 (-54d) |  |  |  |  |
| A64710 | Retroreflective Thermoplastic White Traffic lines | 2027-05-30 → 2027-04-05 (-55d) | 2027-05-30 → 2027-04-06 (-54d) |  |  | 128d → 174.3d |  |
| A64720 | Retroreflective Thermoplastic Yellow Traffic lines | 2027-05-31 → 2027-04-06 (-55d) | 2027-05-31 → 2027-04-07 (-54d) |  |  | 128d → 174.3d |  |
| 6 | **Traffic Signage** | 2027-06-01 → 2027-04-07 (-55d) | 2027-06-07 → 2027-04-14 (-54d) |  |  |  |  |
| A64730 | Traffic signs, ground mounted, 1 Sheet Alumenium, (breakaway) Single post | 2027-06-01 → 2027-04-07 (-55d) | 2027-06-01 → 2027-04-08 (-54d) |  |  | 128d → 174.3d |  |
| A64740 | Traffic signs, ground mounted, 2 Sheet Alumenium, (breakaway) Single post | 2027-06-02 → 2027-04-08 (-55d) | 2027-06-02 → 2027-04-10 (-53d) |  |  | 128d → 174.3d |  |
| A64750 | Traffic signs, ground mounted, Sheet Alumenium, (breakaway) Double post | 2027-06-03 → 2027-04-10 (-54d) | 2027-06-03 → 2027-04-11 (-53d) |  |  | 128d → 174.3d |  |
| A64760 | Retroreflective raised pavement markers (Type A) | 2027-06-05 → 2027-04-11 (-55d) | 2027-06-05 → 2027-04-12 (-54d) |  |  | 140d → 186.3d |  |
| A64770 | Ceramic raised pavement markers | 2027-06-06 → 2027-04-12 (-55d) | 2027-06-06 → 2027-04-13 (-54d) |  |  | 140d → 186.3d |  |
| A64780 | Solar powered lighting cateyes pavement markers | 2027-06-07 → 2027-04-13 (-55d) | 2027-06-07 → 2027-04-14 (-54d) |  |  | 153d → 199.3d |  |
| R20 | **Road 20** | 2026-08-05 → 2026-08-15 (+10d) | 2027-06-09 → 2027-04-17 (-53d) |  |  |  |  |
| AGG | **Aggregate Base Course** | 2026-08-05 → 2026-08-15 (+10d) | 2026-08-08 → 2026-09-20 (+43d) |  |  |  |  |
| A64790 | Aggregate base course | 2026-08-05 → 2026-08-15 A (+10d) | 2026-08-08 → 2026-09-20 A (+43d) |  | 0% → 100% | 0d → none |  |
| 2 | **Bituminous Construction** | 2026-08-09 → 2026-08-20 (+11d) | 2026-08-09 → 2026-09-28 (+50d) |  |  |  |  |
| A64800 | Bituminous base course (Grading I - Class A) | 2026-08-09 → 2026-08-20 A (+11d) | 2026-08-09 → 2026-09-28 A (+50d) |  | 0% → 100% | 46d → none | A64790 → A64790, A64840 |
| 3 | **Asphalt Wearing Course** | 2027-03-08 → 2027-04-05 (+28d) | 2027-03-13 → 2027-04-06 (+24d) |  |  |  |  |
| A64810 | Bituminous concrete wearing course | 2027-03-08 → 2027-04-05 (+28d) | 2027-03-13 → 2027-04-06 (+24d) | 5d → 1d |  | 1d → 48.3d |  |
| 4 | **Precast Concrete Curb** | 2027-05-26 → 2026-08-29 (-270d) | 2027-05-30 → 2026-12-24 (-157d) |  |  |  |  |
| A64820 | Concrete curb, Type (K1A) | 2027-05-26 → 2026-08-29 A (-270d) | 2027-05-26 → 2026-12-22 (-155d) |  | 0% → 24% | 126d → -71.44d | A64790, A64810, A10270 → A64790 |
| A64830 | Concrete curb, Type (K1B) | 2027-05-27 → 2026-08-29 A (-271d) | 2027-05-27 → 2026-12-22 (-156d) |  | 0% → 24% | 126d → -71.44d | A64820, A10270 → A64820 |
| A64840 | Concrete curb, Type (K2) | 2027-05-29 → 2026-08-29 A (-273d) | 2027-05-30 → 2026-12-24 (-157d) |  | 0% → 24% | 126d → -71.44d | A64830, A10270 → A64830 |
| 5 | **Pavement Markings** | 2027-05-31 → 2027-04-06 (-55d) | 2027-06-01 → 2027-04-08 (-54d) |  |  |  |  |
| A64850 | Retroreflective Thermoplastic White Traffic lines | 2027-05-31 → 2027-04-06 (-55d) | 2027-05-31 → 2027-04-07 (-54d) |  |  | 126d → 172.3d |  |
| A64860 | Retroreflective Thermoplastic Yellow Traffic lines | 2027-06-01 → 2027-04-07 (-55d) | 2027-06-01 → 2027-04-08 (-54d) |  |  | 126d → 172.3d |  |
| 6 | **Traffic Signage** | 2027-06-02 → 2027-04-08 (-55d) | 2027-06-09 → 2027-04-17 (-53d) |  |  |  |  |
| A64870 | Traffic signs, ground mounted, 1 Sheet Alumenium, (breakaway) Single post | 2027-06-02 → 2027-04-08 (-55d) | 2027-06-02 → 2027-04-10 (-53d) |  |  | 126d → 172.3d |  |
| A64880 | Traffic signs, ground mounted, 2 Sheet Alumenium, (breakaway) Single post | 2027-06-03 → 2027-04-10 (-54d) | 2027-06-03 → 2027-04-11 (-53d) |  |  | 126d → 172.3d |  |
| A64890 | Traffic signs, ground mounted, Sheet Alumenium, (breakaway) Double post | 2027-06-05 → 2027-04-11 (-55d) | 2027-06-06 → 2027-04-13 (-54d) |  |  | 126d → 172.3d |  |
| A64900 | Retroreflective raised pavement markers (Type A) | 2027-06-07 → 2027-04-13 (-55d) | 2027-06-07 → 2027-04-14 (-54d) |  |  | 138d → 184.3d |  |
| A64910 | Ceramic raised pavement markers | 2027-06-08 → 2027-04-14 (-55d) | 2027-06-08 → 2027-04-15 (-54d) |  |  | 138d → 184.3d |  |
| A64920 | Solar powered lighting cateyes pavement markers | 2027-06-09 → 2027-04-15 (-55d) | 2027-06-09 → 2027-04-17 (-53d) |  |  | 151d → 197.3d |  |
| R21 | **Road 21** | 2026-08-09 → 2026-08-29 (+20d) | 2027-06-09 → 2027-04-18 (-52d) |  |  |  |  |
| AGG | **Aggregate Base Course** | 2026-08-09 → 2026-08-29 (+20d) | 2026-08-11 → 2026-12-21 (+132d) |  |  |  |  |
| A64930 | Aggregate base course | 2026-08-09 → 2026-08-29 A (+20d) | 2026-08-11 → 2026-12-21 (+132d) |  | 0% → 98% | 0d → -81.42d |  |
| 2 | **Bituminous Construction** | 2026-08-12 → 2026-08-29 (+17d) | 2026-08-12 → 2026-12-26 (+136d) |  |  |  |  |
| A64940 | Bituminous base course (Grading I - Class A) | 2026-08-12 → 2026-08-29 A (+17d) | 2026-08-12 → 2026-12-26 (+136d) |  | 0% → 98% | 43d → -72.48d | A64930 → A64930, A64980 |
| 3 | **Asphalt Wearing Course** | 2027-03-14 → 2027-04-06 (+23d) | 2027-03-22 → 2027-04-07 (+16d) |  |  |  |  |
| A64950 | Bituminous concrete wearing course | 2027-03-14 → 2027-04-06 (+23d) | 2027-03-22 → 2027-04-07 (+16d) | 8d → 1d |  | 1d → 48.3d |  |
| 4 | **Precast Concrete Curb** | 2027-05-26 → 2026-12-21 (-156d) | 2027-05-30 → 2026-12-26 (-155d) |  |  |  |  |
| A64960 | Concrete curb, Type (K1A) | 2027-05-26 → 2026-12-21 (-156d) | 2027-05-26 → 2026-12-22 (-155d) |  |  | 126d → -72.48d | A64930, A64950, A10270 → A64930 |
| A64970 | Concrete curb, Type (K1B) | 2027-05-27 → 2026-12-22 (-156d) | 2027-05-27 → 2026-12-23 (-155d) |  |  | 126d → -72.48d | A64960, A10270 → A64960 |
| A64980 | Concrete curb, Type (K2) | 2027-05-29 → 2026-12-23 (-157d) | 2027-05-30 → 2026-12-26 (-155d) |  |  | 126d → -72.48d | A64970, A10270 → A64970 |
| 5 | **Pavement Markings** | 2027-05-31 → 2027-04-07 (-54d) | 2027-06-01 → 2027-04-10 (-52d) |  |  |  |  |
| A64990 | Retroreflective Thermoplastic White Traffic lines | 2027-05-31 → 2027-04-07 (-54d) | 2027-05-31 → 2027-04-08 (-53d) |  |  | 126d → 171.3d |  |
| A65000 | Retroreflective Thermoplastic Yellow Traffic lines | 2027-06-01 → 2027-04-08 (-54d) | 2027-06-01 → 2027-04-10 (-52d) |  |  | 126d → 171.3d |  |
| 6 | **Traffic Signage** | 2027-06-02 → 2027-04-10 (-53d) | 2027-06-09 → 2027-04-18 (-52d) |  |  |  |  |
| A65010 | Traffic signs, ground mounted, 1 Sheet Alumenium, (breakaway) Single post | 2027-06-02 → 2027-04-10 (-53d) | 2027-06-02 → 2027-04-11 (-52d) |  |  | 126d → 171.3d |  |
| A65020 | Traffic signs, ground mounted, 2 Sheet Alumenium, (breakaway) Single post | 2027-06-03 → 2027-04-11 (-53d) | 2027-06-03 → 2027-04-12 (-52d) |  |  | 126d → 171.3d |  |
| A62890 | Traffic signs, ground mounted, Sheet Alumenium, (breakaway) Double post | 2027-06-05 → 2027-04-12 (-54d) | 2027-06-06 → 2027-04-14 (-53d) |  |  | 126d → 171.3d |  |
| A62900 | Retroreflective raised pavement markers (Type A) | 2027-06-07 → 2027-04-14 (-54d) | 2027-06-07 → 2027-04-15 (-53d) |  |  | 138d → 183.3d |  |
| A62910 | Ceramic raised pavement markers | 2027-06-08 → 2027-04-15 (-54d) | 2027-06-08 → 2027-04-17 (-52d) |  |  | 138d → 183.3d |  |
| A62920 | Solar powered lighting cateyes pavement markers | 2027-06-09 → 2027-04-17 (-53d) | 2027-06-09 → 2027-04-18 (-52d) |  |  | 151d → 196.3d |  |
| R22 | **Road 22** | 2026-08-12 → 2026-08-29 (+17d) | 2027-06-07 → 2027-04-19 (-49d) |  |  |  |  |
| AGG | **Aggregate Base Course** | 2026-08-12 → 2026-08-29 (+17d) | 2026-08-15 → 2026-12-21 (+128d) |  |  |  |  |
| A62930 | Aggregate base course | 2026-08-12 → 2026-08-29 A (+17d) | 2026-08-15 → 2026-12-21 (+128d) |  | 0% → 98% | 0d → -81.42d |  |
| 2 | **Bituminous Construction** | 2026-08-16 → 2026-08-29 (+13d) | 2026-08-16 → 2026-12-24 (+130d) |  |  |  |  |

| ID | Task | Start | Finish | Duration | Complete | Total float | Predecessors |
| --- | --- | --- | --- | --- | --- | --- | --- |
| A62940 | Bituminous base course (Grading I - Class A) | 2026-08-16 → 2026-08-29 A (+13d) | 2026-08-16 → 2026-12-24 (+130d) |  | 0% → 98% | 40d → -71.54d | A62930 → A62930, A62980 |
| 3 | **Asphalt Wearing Course** | 2027-03-23 → 2027-04-07 (+15d) | 2027-03-25 → 2027-04-10 (+16d) |  |  |  |  |
| A62950 | Bituminous concrete wearing course | 2027-03-23 → 2027-04-07 (+15d) | 2027-03-25 → 2027-04-10 (+16d) | 3d → 2d |  | 1d → 48.3d |  |
| 4 | **Precast Concrete Curb** | 2027-05-26 → 2026-12-21 (-156d) | 2027-05-29 → 2026-12-24 (-156d) |  |  |  |  |
| A62960 | Concrete curb, Type (K1A) | 2027-05-26 → 2026-12-21 (-156d) | 2027-05-26 → 2026-12-22 (-155d) |  |  | 128d → -71.54d | A62930, A62950, A10270 → A62930 |
| A62970 | Concrete curb, Type (K1B) | 2027-05-27 → 2026-12-22 (-156d) | 2027-05-27 → 2026-12-23 (-155d) |  |  | 128d → -71.54d | A62960, A10270 → A62960 |
| A62980 | Concrete curb, Type (K2) | 2027-05-29 → 2026-12-23 (-157d) | 2027-05-29 → 2026-12-24 (-156d) |  |  | 128d → -71.54d | A62970, A10270 → A62970 |
| 5 | **Pavement Markings** | 2027-05-30 → 2027-04-10 (-50d) | 2027-05-31 → 2027-04-12 (-49d) |  |  |  |  |
| A62990 | Retroreflective Thermoplastic White Traffic lines | 2027-05-30 → 2027-04-10 (-50d) | 2027-05-30 → 2027-04-11 (-49d) |  |  | 128d → 170.3d |  |
| A63000 | Retroreflective Thermoplastic Yellow Traffic lines | 2027-05-31 → 2027-04-11 (-50d) | 2027-05-31 → 2027-04-12 (-49d) |  |  | 128d → 170.3d |  |
| 6 | **Traffic Signage** | 2027-06-01 → 2027-04-12 (-50d) | 2027-06-07 → 2027-04-19 (-49d) |  |  |  |  |
| A63010 | Traffic signs, ground mounted, 1 Sheet Alumenium, (breakaway) Single post | 2027-06-01 → 2027-04-12 (-50d) | 2027-06-01 → 2027-04-13 (-49d) |  |  | 128d → 170.3d |  |
| A63020 | Traffic signs, ground mounted, 2 Sheet Alumenium, (breakaway) Single post | 2027-06-02 → 2027-04-13 (-50d) | 2027-06-02 → 2027-04-14 (-49d) |  |  | 128d → 170.3d |  |
| A63030 | Traffic signs, ground mounted, Sheet Alumenium, (breakaway) Double post | 2027-06-03 → 2027-04-14 (-50d) | 2027-06-03 → 2027-04-15 (-49d) |  |  | 128d → 170.3d |  |
| A63040 | Retroreflective raised pavement markers (Type A) | 2027-06-05 → 2027-04-15 (-51d) | 2027-06-05 → 2027-04-17 (-49d) |  |  | 140d → 182.3d |  |
| A63050 | Ceramic raised pavement markers | 2027-06-06 → 2027-04-17 (-50d) | 2027-06-06 → 2027-04-18 (-49d) |  |  | 140d → 182.3d |  |
| A63060 | Solar powered lighting cateyes pavement markers | 2027-06-07 → 2027-04-18 (-50d) | 2027-06-07 → 2027-04-19 (-49d) |  |  | 153d → 195.3d |  |
| R23 | **Road 23** | 2026-08-16 → 2026-08-29 (+13d) | 2027-06-07 → 2027-04-20 (-48d) |  |  |  |  |
| AGG | **Aggregate Base Course** | 2026-08-16 → 2026-08-29 (+13d) | 2026-08-18 → 2026-12-21 (+125d) |  |  |  |  |
| A63070 | Aggregate base course | 2026-08-16 → 2026-08-29 A (+13d) | 2026-08-18 → 2026-12-21 (+125d) |  | 0% → 98% | 0d → -81.42d |  |
| 2 | **Bituminous Construction** | 2026-08-19 → 2026-08-29 (+10d) | 2026-08-19 → 2026-12-24 (+127d) |  |  |  |  |
| A63080 | Bituminous base course (Grading I - Class A) | 2026-08-19 → 2026-08-29 A (+10d) | 2026-08-19 → 2026-12-24 (+127d) |  | 0% → 98% | 37d → -71.6d | A63070 → A63070, A63120 |
| 3 | **Asphalt Wearing Course** | 2027-03-27 → 2027-04-10 (+14d) | 2027-03-29 → 2027-04-11 (+13d) |  |  |  |  |
| A63090 | Bituminous concrete wearing course | 2027-03-27 → 2027-04-10 (+14d) | 2027-03-29 → 2027-04-11 (+13d) | 3d → 1d |  | 1d → 48.3d |  |
| 4 | **Precast Concrete Curb** | 2027-05-26 → 2026-12-21 (-156d) | 2027-05-29 → 2026-12-24 (-156d) |  |  |  |  |
| A63100 | Concrete curb, Type (K1A) | 2027-05-26 → 2026-12-21 (-156d) | 2027-05-26 → 2026-12-22 (-155d) |  |  | 128d → -71.6d | A63070, A63090, A10270 → A63070 |
| A63110 | Concrete curb, Type (K1B) | 2027-05-27 → 2026-12-22 (-156d) | 2027-05-27 → 2026-12-23 (-155d) |  |  | 128d → -71.6d | A63100, A10270 → A63100 |
| A63120 | Concrete curb, Type (K2) | 2027-05-29 → 2026-12-23 (-157d) | 2027-05-29 → 2026-12-24 (-156d) |  |  | 128d → -71.6d | A63110, A10270 → A63110 |
| 5 | **Pavement Markings** | 2027-05-30 → 2027-04-11 (-49d) | 2027-05-31 → 2027-04-13 (-48d) |  |  |  |  |
| A63130 | Retroreflective Thermoplastic White Traffic lines | 2027-05-30 → 2027-04-11 (-49d) | 2027-05-30 → 2027-04-12 (-48d) |  |  | 128d → 169.3d |  |
| A63140 | Retroreflective Thermoplastic Yellow Traffic lines | 2027-05-31 → 2027-04-12 (-49d) | 2027-05-31 → 2027-04-13 (-48d) |  |  | 128d → 169.3d |  |
| 6 | **Traffic Signage** | 2027-06-01 → 2027-04-13 (-49d) | 2027-06-07 → 2027-04-20 (-48d) |  |  |  |  |
| A63150 | Traffic signs, ground mounted, 1 Sheet Alumenium, (breakaway) Single post | 2027-06-01 → 2027-04-13 (-49d) | 2027-06-01 → 2027-04-14 (-48d) |  |  | 128d → 169.3d |  |
| A63160 | Traffic signs, ground mounted, 2 Sheet Alumenium, (breakaway) Single post | 2027-06-02 → 2027-04-14 (-49d) | 2027-06-02 → 2027-04-15 (-48d) |  |  | 128d → 169.3d |  |
| A63170 | Traffic signs, ground mounted, Sheet Alumenium, (breakaway) Double post | 2027-06-03 → 2027-04-15 (-49d) | 2027-06-03 → 2027-04-17 (-47d) |  |  | 128d → 169.3d |  |
| A63180 | Retroreflective raised pavement markers (Type A) | 2027-06-05 → 2027-04-17 (-49d) | 2027-06-05 → 2027-04-18 (-48d) |  |  | 140d → 181.3d |  |
| A63190 | Ceramic raised pavement markers | 2027-06-06 → 2027-04-18 (-49d) | 2027-06-06 → 2027-04-19 (-48d) |  |  | 140d → 181.3d |  |
| A63200 | Solar powered lighting cateyes pavement markers | 2027-06-07 → 2027-04-19 (-49d) | 2027-06-07 → 2027-04-20 (-48d) |  |  | 153d → 194.3d |  |
| R24 | **Road 24** | 2026-08-19 → 2026-08-29 (+10d) | 2027-06-08 → 2027-04-22 (-47d) |  |  |  |  |
| AGG | **Aggregate Base Course** | 2026-08-19 → 2026-08-29 (+10d) | 2026-08-22 → 2026-12-21 (+121d) |  |  |  |  |
| A63210 | Aggregate base course | 2026-08-19 → 2026-08-29 A (+10d) | 2026-08-22 → 2026-12-21 (+121d) |  | 0% → 97% | 0d → -81.42d |  |
| 2 | **Bituminous Construction** | 2026-08-23 → 2026-08-29 (+6d) | 2026-08-23 → 2026-12-26 (+125d) |  |  |  |  |
| A63220 | Bituminous base course (Grading I - Class A) | 2026-08-23 → 2026-08-29 A (+6d) | 2026-08-23 → 2026-12-26 (+125d) |  | 0% → 97% | 34d → -72.7d | A63210 → A63210, A63260 |
| 3 | **Asphalt Wearing Course** | 2027-03-30 → 2027-04-11 (+12d) | 2027-04-04 → 2027-04-13 (+9d) |  |  |  |  |
| A63230 | Bituminous concrete wearing course | 2027-03-30 → 2027-04-11 (+12d) | 2027-04-04 → 2027-04-13 (+9d) | 5d → 2d |  | 1d → 48.3d |  |
| 4 | **Precast Concrete Curb** | 2027-05-26 → 2026-12-21 (-156d) | 2027-05-30 → 2026-12-26 (-155d) |  |  |  |  |
| A63240 | Concrete curb, Type (K1A) | 2027-05-26 → 2026-12-21 (-156d) | 2027-05-26 → 2026-12-22 (-155d) |  |  | 127d → -72.7d | A63210, A63230, A10270 → A63210 |
| A63250 | Concrete curb, Type (K1B) | 2027-05-27 → 2026-12-22 (-156d) | 2027-05-27 → 2026-12-23 (-155d) |  |  | 127d → -72.7d | A63240, A10270 → A63240 |
| A63260 | Concrete curb, Type (K2) | 2027-05-29 → 2026-12-23 (-157d) | 2027-05-30 → 2026-12-26 (-155d) |  |  | 127d → -72.7d | A63250, A10270 → A63250 |
| 5 | **Pavement Markings** | 2027-05-31 → 2027-04-13 (-48d) | 2027-06-01 → 2027-04-15 (-47d) |  |  |  |  |
| A63270 | Retroreflective Thermoplastic White Traffic lines | 2027-05-31 → 2027-04-13 (-48d) | 2027-05-31 → 2027-04-14 (-47d) |  |  | 127d → 167.3d |  |
| A63280 | Retroreflective Thermoplastic Yellow Traffic lines | 2027-06-01 → 2027-04-14 (-48d) | 2027-06-01 → 2027-04-15 (-47d) |  |  | 127d → 167.3d |  |
| 6 | **Traffic Signage** | 2027-06-02 → 2027-04-15 (-48d) | 2027-06-08 → 2027-04-22 (-47d) |  |  |  |  |
| A63290 | Traffic signs, ground mounted, 1 Sheet Alumenium, (breakaway) Single post | 2027-06-02 → 2027-04-15 (-48d) | 2027-06-02 → 2027-04-17 (-46d) |  |  | 127d → 167.3d |  |
| A63300 | Traffic signs, ground mounted, 2 Sheet Alumenium, (breakaway) Single post | 2027-06-03 → 2027-04-17 (-47d) | 2027-06-03 → 2027-04-18 (-46d) |  |  | 127d → 167.3d |  |
| A63310 | Traffic signs, ground mounted, Sheet Alumenium, (breakaway) Double post | 2027-06-05 → 2027-04-18 (-48d) | 2027-06-05 → 2027-04-19 (-47d) |  |  | 127d → 167.3d |  |
| A63320 | Retroreflective raised pavement markers (Type A) | 2027-06-06 → 2027-04-19 (-48d) | 2027-06-06 → 2027-04-20 (-47d) |  |  | 139d → 179.3d |  |
| A63330 | Ceramic raised pavement markers | 2027-06-07 → 2027-04-20 (-48d) | 2027-06-07 → 2027-04-21 (-47d) |  |  | 139d → 179.3d |  |
| A63340 | Solar powered lighting cateyes pavement markers | 2027-06-08 → 2027-04-21 (-48d) | 2027-06-08 → 2027-04-22 (-47d) |  |  | 152d → 192.3d |  |
| R25 | **Road 25** | 2026-08-23 → 2026-08-20 (-3d) | 2027-06-09 → 2027-04-26 (-44d) |  |  |  |  |
| AGG | **Aggregate Base Course** | 2026-08-23 → 2026-08-20 (-3d) | 2026-08-25 → 2026-09-28 (+34d) |  |  |  |  |
| A63350 | Aggregate base course | 2026-08-23 → 2026-08-20 A (-3d) | 2026-08-25 → 2026-09-28 A (+34d) |  | 0% → 100% | 0d → none |  |
| 2 | **Bituminous Construction** | 2026-08-26 → 2026-08-20 (-6d) | 2026-08-26 → 2026-09-28 (+33d) |  |  |  |  |
| A63360 | Bituminous base course (Grading I - Class A) | 2026-08-26 → 2026-08-20 A (-6d) | 2026-08-26 → 2026-09-28 A (+33d) |  | 0% → 100% | 31d → none | A63350 → A63350, A63400 |
| 3 | **Asphalt Wearing Course** | 2027-04-05 → 2027-04-13 (+8d) | 2027-04-11 → 2027-04-15 (+4d) |  |  |  |  |
| A63370 | Bituminous concrete wearing course | 2027-04-05 → 2027-04-13 (+8d) | 2027-04-11 → 2027-04-15 (+4d) | 6d → 2d |  | 1d → 48.3d |  |
| 4 | **Precast Concrete Curb** | 2027-05-26 → 2026-12-21 (-156d) | 2027-05-30 → 2026-12-26 (-155d) |  |  |  |  |
| A63380 | Concrete curb, Type (K1A) | 2027-05-26 → 2026-12-21 (-156d) | 2027-05-26 → 2026-12-22 (-155d) |  |  | 137d → -72.67d | A63350, A63370, A10270 → A63350 |
| A63390 | Concrete curb, Type (K1B) | 2027-05-27 → 2026-12-22 (-156d) | 2027-05-27 → 2026-12-23 (-155d) |  |  | 137d → -72.67d | A63380, A10270 → A63380 |
| A63400 | Concrete curb, Type (K2) | 2027-05-29 → 2026-12-23 (-157d) | 2027-05-30 → 2026-12-26 (-155d) |  |  | 137d → -72.67d | A63390, A10270 → A63390 |

| ID | Task | Start | Finish | Duration | Complete | Total float | Predecessors |
| --- | --- | --- | --- | --- | --- | --- | --- |
| 5 | **Pavement Markings** | 2027-05-31 → 2027-04-15 (-46d) | 2027-06-01 → 2027-04-18 (-44d) |  |  |  |  |
| A63410 | Retroreflective Thermoplastic White Traffic lines | 2027-05-31 → 2027-04-15 (-46d) | 2027-05-31 → 2027-04-17 (-44d) |  |  | 137d → 175.3d |  |
| A63420 | Retroreflective Thermoplastic Yellow Traffic lines | 2027-06-01 → 2027-04-17 (-45d) | 2027-06-01 → 2027-04-18 (-44d) |  |  | 137d → 175.3d |  |
| 6 | **Traffic Signage** | 2027-06-02 → 2027-04-18 (-45d) | 2027-06-09 → 2027-04-26 (-44d) |  |  |  |  |
| A63430 | Traffic signs, ground mounted, 1 Sheet Alumenium, (breakaway) Single post | 2027-06-02 → 2027-04-18 (-45d) | 2027-06-02 → 2027-04-19 (-44d) |  |  | 137d → 175.3d |  |
| A63440 | Traffic signs, ground mounted, 2 Sheet Alumenium, (breakaway) Single post | 2027-06-03 → 2027-04-19 (-45d) | 2027-06-03 → 2027-04-20 (-44d) |  |  | 137d → 175.3d |  |
| A63450 | Traffic signs, ground mounted, Sheet Alumenium, (breakaway) Double post | 2027-06-05 → 2027-04-20 (-46d) | 2027-06-06 → 2027-04-22 (-45d) |  |  | 137d → 175.3d |  |
| A63460 | Retroreflective raised pavement markers (Type A) | 2027-06-07 → 2027-04-22 (-46d) | 2027-06-07 → 2027-04-24 (-44d) |  |  | 149d → 187.3d |  |
| A63470 | Ceramic raised pavement markers | 2027-06-08 → 2027-04-24 (-45d) | 2027-06-08 → 2027-04-25 (-44d) |  |  | 149d → 187.3d |  |
| A63480 | Solar powered lighting cateyes pavement markers | 2027-06-09 → 2027-04-25 (-45d) | 2027-06-09 → 2027-04-26 (-44d) |  |  | 151d → 189.3d |  |
| R251 | **Road 26** | 2026-08-26 → 2026-09-05 (+10d) | 2027-06-06 → 2027-04-27 (-40d) |  |  |  |  |
| AGG | **Aggregate Base Course** | 2026-08-26 → 2026-09-05 (+10d) | 2026-08-29 → 2026-12-24 (+117d) |  |  |  |  |
| A63910 | Aggregate base course | 2026-08-26 → 2026-09-05 A (+10d) | 2026-08-29 → 2026-12-24 (+117d) |  | 0% → 20% | 0d → -81.42d |  |
| 2 | **Bituminous Construction** | 2026-08-30 → 2026-09-05 (+6d) | 2026-09-09 → 2026-12-30 (+112d) |  |  |  |  |
| A63920 | Bituminous base course (Grading I - Class A) | 2026-08-30 → 2026-09-05 A (+6d) | 2026-09-09 → 2026-12-30 (+112d) | 10d → 2d | 0% → 20% | 19d → -76.67d | A63910 → A63910, A63960 |
| 3 | **Asphalt Wearing Course** | 2027-04-12 → 2027-04-15 (+3d) | 2027-04-28 → 2027-04-20 (-8d) |  |  |  |  |
| A63930 | Bituminous concrete wearing course | 2027-04-12 → 2027-04-15 (+3d) | 2027-04-28 → 2027-04-20 (-8d) | 15d → 4d |  | 1d → 48.3d |  |
| 4 | **Precast Concrete Curb** | 2027-05-26 → 2026-12-24 (-153d) | 2027-05-30 → 2026-12-29 (-152d) |  |  |  |  |
| A63940 | Concrete curb, Type (K1A) | 2027-05-26 → 2026-12-24 (-153d) | 2027-05-30 → 2026-12-29 (-152d) |  |  | 126d → -76.67d | A63910, A63930, A10270 → A63910 |
| A63950 | Concrete curb, Type (K1B) | 2027-05-26 → 2026-12-24 (-153d) | 2027-05-30 → 2026-12-29 (-152d) |  |  | 126d → -76.67d | A63940 SS, A63940 FF, A10270 → A63940 SS, A63940 FF |
| A63960 | Concrete curb, Type (K2) | 2027-05-26 → 2026-12-24 (-153d) | 2027-05-30 → 2026-12-29 (-152d) |  |  | 126d → -76.67d | A63950 SS, A63950 FF, A10270 → A63950 SS, A63950 FF |
| 5 | **Pavement Markings** | 2027-05-31 → 2027-04-20 (-41d) | 2027-06-03 → 2027-04-25 (-39d) |  |  |  |  |
| A63970 | Retroreflective Thermoplastic White Traffic lines | 2027-05-31 → 2027-04-20 (-41d) | 2027-06-01 → 2027-04-22 (-40d) |  |  | 126d → 160.3d |  |
| A63980 | Retroreflective Thermoplastic Yellow Traffic lines | 2027-06-02 → 2027-04-22 (-41d) | 2027-06-03 → 2027-04-25 (-39d) |  |  | 126d → 160.3d |  |
| 6 | **Traffic Signage** | 2027-06-05 → 2027-04-25 (-41d) | 2027-06-06 → 2027-04-27 (-40d) |  |  |  |  |
| A63990 | Traffic signs, ground mounted, 1 Sheet Alumenium, (breakaway) Single post | 2027-06-05 → 2027-04-25 (-41d) | 2027-06-06 → 2027-04-27 (-40d) |  |  | 154d → 188.3d |  |
| A64000 | Traffic signs, ground mounted, 2 Sheet Alumenium, (breakaway) Single post | 2027-06-05 → 2027-04-25 (-41d) | 2027-06-06 → 2027-04-27 (-40d) |  |  | 154d → 188.3d |  |
| A64010 | Traffic signs, ground mounted, Sheet Alumenium, (breakaway) Double post | 2027-06-05 → 2027-04-25 (-41d) | 2027-06-06 → 2027-04-27 (-40d) |  |  | 126d → 160.3d |  |
| A64020 | Retroreflective raised pavement markers (Type A) | 2027-06-05 → 2027-04-25 (-41d) | 2027-06-06 → 2027-04-27 (-40d) |  |  | 154d → 188.3d |  |
| A64030 | Ceramic raised pavement markers | 2027-06-05 → 2027-04-25 (-41d) | 2027-06-06 → 2027-04-27 (-40d) |  |  | 140d → 174.3d |  |
| A64040 | Solar powered lighting cateyes pavement markers | 2027-06-05 → 2027-04-25 (-41d) | 2027-06-06 → 2027-04-27 (-40d) |  |  | 154d → 188.3d |  |
| R2511 | **Road 27** | 2026-08-30 → 2026-09-05 (+6d) | 2027-06-09 → 2027-05-03 (-37d) |  |  |  |  |
| AGG | **Aggregate Base Course** | 2026-08-30 → 2026-09-05 (+6d) | 2026-09-01 → 2026-12-24 (+114d) |  |  |  |  |
| A64050 | Aggregate base course | 2026-08-30 → 2026-09-05 A (+6d) | 2026-09-01 → 2026-12-24 (+114d) |  | 0% → 95% | 0d → -81.42d |  |
| 2 | **Bituminous Construction** | 2026-09-02 → 2026-09-05 (+3d) | 2026-09-02 → 2026-12-29 (+118d) |  |  |  |  |
| A64060 | Bituminous base course (Grading I - Class A) | 2026-09-02 → 2026-09-05 A (+3d) | 2026-09-02 → 2026-12-29 (+118d) |  | 0% → 90% | 25d → -75.32d | A64050 → A64050, A64100 |
| 3 | **Asphalt Wearing Course** | 2027-04-29 → 2027-04-20 (-9d) | 2027-05-04 → 2027-04-22 (-12d) |  |  |  |  |
| A64070 | Bituminous concrete wearing course | 2027-04-29 → 2027-04-20 (-9d) | 2027-05-04 → 2027-04-22 (-12d) | 5d → 2d |  | 1d → 48.3d |  |
| 4 | **Precast Concrete Curb** | 2027-05-26 → 2026-12-24 (-153d) | 2027-05-30 → 2026-12-29 (-152d) |  |  |  |  |
| A64080 | Concrete curb, Type (K1A) | 2027-05-26 → 2026-12-24 (-153d) | 2027-05-26 → 2026-12-26 (-151d) |  |  | 126d → -75.32d | A64050, A64070, A10270 → A64050 |
| A64090 | Concrete curb, Type (K1B) | 2027-05-27 → 2026-12-26 (-152d) | 2027-05-27 → 2026-12-27 (-151d) |  |  | 126d → -75.32d | A64080, A10270 → A64080 |
| A64100 | Concrete curb, Type (K2) | 2027-05-29 → 2026-12-27 (-153d) | 2027-05-30 → 2026-12-29 (-152d) |  |  | 126d → -75.32d | A64090, A10270 → A64090 |
| 5 | **Pavement Markings** | 2027-05-31 → 2027-04-22 (-39d) | 2027-06-01 → 2027-04-25 (-37d) |  |  |  |  |
| A64110 | Retroreflective Thermoplastic White Traffic lines | 2027-05-31 → 2027-04-22 (-39d) | 2027-05-31 → 2027-04-24 (-37d) |  |  | 126d → 158.3d |  |
| A64120 | Retroreflective Thermoplastic Yellow Traffic lines | 2027-06-01 → 2027-04-24 (-38d) | 2027-06-01 → 2027-04-25 (-37d) |  |  | 126d → 158.3d |  |
| 6 | **Traffic Signage** | 2027-06-02 → 2027-04-25 (-38d) | 2027-06-09 → 2027-05-03 (-37d) |  |  |  |  |
| A64130 | Traffic signs, ground mounted, 1 Sheet Alumenium, (breakaway) Single post | 2027-06-02 → 2027-04-25 (-38d) | 2027-06-02 → 2027-04-26 (-37d) |  |  | 126d → 158.3d |  |
| A64140 | Traffic signs, ground mounted, 2 Sheet Alumenium, (breakaway) Single post | 2027-06-03 → 2027-04-26 (-38d) | 2027-06-03 → 2027-04-27 (-37d) |  |  | 126d → 158.3d |  |
| A64150 | Traffic signs, ground mounted, Sheet Alumenium, (breakaway) Double post | 2027-06-05 → 2027-04-27 (-39d) | 2027-06-06 → 2027-04-29 (-38d) |  |  | 126d → 158.3d |  |
| A64160 | Retroreflective raised pavement markers (Type A) | 2027-06-07 → 2027-04-29 (-39d) | 2027-06-07 → 2027-05-01 (-37d) |  |  | 138d → 170.3d |  |
| A64170 | Ceramic raised pavement markers | 2027-06-08 → 2027-05-01 (-38d) | 2027-06-08 → 2027-05-02 (-37d) |  |  | 138d → 170.3d |  |
| A64180 | Solar powered lighting cateyes pavement markers | 2027-06-09 → 2027-05-02 (-38d) | 2027-06-09 → 2027-05-03 (-37d) |  |  | 151d → 183.3d |  |
| CO2 | **Collector 2** | 2026-09-02 → 2026-08-29 (-4d) | 2027-06-29 → 2027-05-08 (-52d) |  |  |  |  |
| AGG | **Aggregate Base Course** | 2026-09-02 → 2026-08-29 (-4d) | 2026-09-06 → 2026-12-24 (+109d) |  |  |  |  |
| A63490 | Aggregate base course | 2026-09-02 → 2026-08-29 A (-4d) | 2026-09-06 → 2026-12-24 (+109d) |  | 0% → 98% | 0d → -81.42d |  |
| 2 | **Bituminous Construction** | 2026-09-07 → 2026-08-29 (-9d) | 2026-10-01 → 2027-01-05 (+96d) |  |  |  |  |
| A63500 | Bituminous base course (Grading I - Class A) | 2026-09-07 → 2026-08-29 A (-9d) | 2026-10-01 → 2027-01-05 (+96d) | 22d → 4d | 0% → 97% | 0d → -81.42d | A63490 → A63490, A63540 |
| 3 | **Asphalt Wearing Course** | 2027-05-05 → 2027-04-22 (-13d) | 2027-06-08 → 2027-04-28 (-41d) |  |  |  |  |
| A63510 | Bituminous concrete wearing course | 2027-05-05 → 2027-04-22 (-13d) | 2027-06-08 → 2027-04-28 (-41d) | 30d → 5d |  | 1d → 48.3d |  |
| 4 | **Precast Concrete Curb** | 2027-06-09 → 2026-12-24 (-167d) | 2027-06-20 → 2027-01-05 (-166d) |  |  |  |  |
| A63520 | Concrete curb, Type (K1A) | 2027-06-09 → 2026-12-24 (-167d) | 2027-06-12 → 2026-12-28 (-166d) |  |  | 5d → -81.42d | A63490, A63510, A10270 → A63490 |
| A63530 | Concrete curb, Type (K1B) | 2027-06-13 → 2026-12-28 (-167d) | 2027-06-15 → 2026-12-31 (-166d) |  |  | 5d → -81.42d | A63520, A10270 → A63520 |
| A63540 | Concrete curb, Type (K2) | 2027-06-16 → 2026-12-31 (-167d) | 2027-06-20 → 2027-01-05 (-166d) |  |  | 5d → -81.42d | A63530, A10270 → A63530 |
| 5 | **Pavement Markings** | 2027-06-21 → 2027-04-28 (-54d) | 2027-06-22 → 2027-05-01 (-52d) |  |  |  |  |
| A63550 | Retroreflective Thermoplastic White Traffic lines | 2027-06-21 → 2027-04-28 (-54d) | 2027-06-22 → 2027-05-01 (-52d) |  |  | 5d → 59.8d |  |
| A63560 | Retroreflective Thermoplastic Yellow Traffic lines | 2027-06-21 → 2027-04-28 (-54d) | 2027-06-22 → 2027-05-01 (-52d) |  |  | 5d → 59.8d |  |
| 6 | **Traffic Signage** | 2027-06-21 → 2027-04-28 (-54d) | 2027-06-29 → 2027-05-08 (-52d) |  |  |  |  |
| A63570 | Traffic signs, ground mounted, 1 Sheet Alumenium, (breakaway) Single post | 2027-06-21 → 2027-04-28 (-54d) | 2027-06-22 → 2027-05-01 (-52d) |  |  | 5d → 59.8d |  |
| A63580 | Traffic signs, ground mounted, 2 Sheet Alumenium, (breakaway) Single post | 2027-06-21 → 2027-04-28 (-54d) | 2027-06-22 → 2027-05-01 (-52d) |  |  | 5d → 59.8d |  |
| A63590 | Traffic signs, ground mounted, Sheet Alumenium, (breakaway) Double post | 2027-06-21 → 2027-04-28 (-54d) | 2027-06-22 → 2027-05-01 (-52d) |  |  | 5d → 59.8d |  |

| ID | Task | Start | Finish | Duration | Complete | Total float | Predecessors |
| --- | --- | --- | --- | --- | --- | --- | --- |
| A63600 | Retroreflective raised pavement markers (Type A) | 2027-06-23 → 2027-05-01 (-53d) | 2027-06-24 → 2027-05-03 (-52d) |  |  | 5d → 59.8d |  |
| A63610 | Ceramic raised pavement markers | 2027-06-26 → 2027-05-03 (-54d) | 2027-06-27 → 2027-05-05 (-53d) |  |  | 5d → 59.8d |  |
| A63620 | Solar powered lighting cateyes pavement markers | 2027-06-28 → 2027-05-05 (-54d) | 2027-06-29 → 2027-05-08 (-52d) |  |  | 5d → 59.8d |  |
| AR1 | **Arterial 1** | 2026-08-09 → 2026-08-29 (+20d) | 2027-07-15 → 2027-05-22 (-54d) |  |  |  |  |
| AGG | **Aggregate Base Course** | 2026-08-09 → 2026-08-29 (+20d) | 2026-08-13 → 2026-12-21 (+130d) |  |  |  |  |
| A63630 | Aggregate base course | 2026-08-09 → 2026-08-29 A (+20d) | 2026-08-13 → 2026-12-21 (+130d) |  | 0% → 99% | 38d → -71.54d |  |
| 2 | **Bituminous Construction** | 2026-08-15 → 2026-08-29 (+14d) | 2026-08-17 → 2026-12-24 (+129d) |  |  |  |  |
| A63640 | Bituminous base course (Grading I - Class A) | 2026-08-15 → 2026-08-29 A (+14d) | 2026-08-17 → 2026-12-24 (+129d) |  | 0% → 98% | 39d → -71.31d | A63630 → A63630, A63680 |
| 3 | **Asphalt Wearing Course** | 2027-06-09 → 2027-04-28 (-42d) | 2027-06-22 → 2027-05-03 (-50d) |  |  |  |  |
| A63650 | Bituminous concrete wearing course | 2027-06-09 → 2027-04-28 (-42d) | 2027-06-22 → 2027-05-03 (-50d) | 12d → 4d |  | 1d → 48.3d |  |
| 4 | **Precast Concrete Curb** | 2027-06-23 → 2026-08-29 (-298d) | 2027-06-27 → 2026-12-24 (-185d) |  |  |  |  |
| A63660 | Concrete curb, Type (K1A) | 2027-06-23 → 2026-08-29 A (-298d) | 2027-06-26 → 2026-12-23 (-185d) |  | 0% → 30% | 1d → -71.31d | A63630, A63650, A10270 → A63630 |
| A63670 | Concrete curb, Type (K1B) | 2027-06-23 → 2026-08-29 A (-298d) | 2027-06-26 → 2026-12-23 (-185d) |  | 0% → 30% | 1d → -71.31d | A63660 SS, A63660 FF, A10270 → A63660 SS, A63660 FF |
| A63680 | Concrete curb, Type (K2) | 2027-06-23 → 2026-08-29 A (-298d) | 2027-06-27 → 2026-12-24 (-185d) |  | 0% → 30% | 1d → -71.31d | A63670 SS, A63670 FF, A10270 → A63670 SS, A63670 FF |
| 5 | **Pavement Markings** | 2027-06-28 → 2027-05-03 (-56d) | 2027-06-29 → 2027-05-05 (-55d) |  |  |  |  |
| A63690 | Retroreflective Thermoplastic White Traffic lines | 2027-06-28 → 2027-05-03 (-56d) | 2027-06-29 → 2027-05-05 (-55d) |  |  | 1d → 48.3d |  |
| A63700 | Retroreflective Thermoplastic Yellow Traffic lines | 2027-06-28 → 2027-05-03 (-56d) | 2027-06-29 → 2027-05-05 (-55d) |  |  | 1d → 48.3d |  |
| 6 | **Traffic Signage** | 2027-06-30 → 2027-05-05 (-56d) | 2027-07-15 → 2027-05-22 (-54d) |  |  |  |  |
| A63710 | Traffic signs, ground mounted, 1 Sheet Alumenium, (breakaway) Single post | 2027-06-30 → 2027-05-05 (-56d) | 2027-07-01 → 2027-05-08 (-54d) |  |  | 1d → 48.3d |  |
| A63720 | Traffic signs, ground mounted, 2 Sheet Alumenium, (breakaway) Single post | 2027-06-30 → 2027-05-05 (-56d) | 2027-07-01 → 2027-05-08 (-54d) |  |  | 1d → 48.3d |  |
| A63730 | Traffic signs, ground mounted, Sheet Alumenium, (breakaway) Double post | 2027-07-03 → 2027-05-08 (-56d) | 2027-07-04 → 2027-05-10 (-55d) |  |  | 1d → 48.3d |  |
| A63740 | Retroreflective raised pavement markers (Type A) | 2027-07-05 → 2027-05-10 (-56d) | 2027-07-08 → 2027-05-15 (-54d) |  |  | 38d → 85.3d |  |
| A63750 | Ceramic raised pavement markers | 2027-07-10 → 2027-05-15 (-56d) | 2027-07-13 → 2027-05-19 (-55d) |  |  | 38d → 85.3d |  |
| A63760 | Solar powered lighting cateyes pavement markers | 2027-07-14 → 2027-05-19 (-56d) | 2027-07-15 → 2027-05-22 (-54d) |  |  | 120d → 167.3d |  |
| AR2 | **Arterial 2** | 2026-08-15 → 2026-08-29 (+14d) | 2027-07-19 → 2027-05-23 (-57d) |  |  |  |  |
| AGG | **Aggregate Base Course** | 2026-08-15 → 2026-08-29 (+14d) | 2026-08-17 → 2026-12-21 (+126d) |  |  |  |  |
| A63770 | Aggregate base course | 2026-08-15 → 2026-08-29 A (+14d) | 2026-08-17 → 2026-12-21 (+126d) |  | 0% → 98% | 38d → -71.54d |  |
| 2 | **Bituminous Construction** | 2026-08-18 → 2026-08-29 (+11d) | 2026-08-18 → 2026-12-24 (+128d) |  |  |  |  |
| A63780 | Bituminous base course (Grading I - Class A) | 2026-08-18 → 2026-08-29 A (+11d) | 2026-08-18 → 2026-12-24 (+128d) |  | 0% → 97% | 38d → -71.54d | A63770 → A63770, A63820 |
| 3 | **Asphalt Wearing Course** | 2027-06-23 → 2027-05-03 (-51d) | 2027-06-29 → 2027-05-04 (-56d) |  |  |  |  |
| A63790 | Bituminous concrete wearing course | 2027-06-23 → 2027-05-03 (-51d) | 2027-06-29 → 2027-05-04 (-56d) | 6d → 1d |  | 102d → 151.3d |  |
| 4 | **Precast Concrete Curb** | 2027-05-26 → 2026-12-21 (-156d) | 2027-06-30 → 2026-12-24 (-188d) |  |  |  |  |
| A63800 | Concrete curb, Type (K1A) | 2027-05-26 → 2026-12-21 (-156d) | 2027-05-26 → 2026-12-22 (-155d) |  |  | 130d → -71.54d | A63770, A10270 → A63770 |
| A63810 | Concrete curb, Type (K1B) | 2027-05-27 → 2026-12-22 (-156d) | 2027-05-27 → 2026-12-23 (-155d) |  |  | 130d → -71.54d | A63800, A10270 → A63800 |
| A63820 | Concrete curb, Type (K2) | 2027-06-30 → 2026-12-23 (-189d) | 2027-06-30 → 2026-12-24 (-188d) |  |  | 102d → -71.54d | A63810, A63790, A10270 → A63810 |
| 5 | **Pavement Markings** | 2027-07-01 → 2027-05-04 (-58d) | 2027-07-05 → 2027-05-09 (-57d) |  |  |  |  |
| A63830 | Retroreflective Thermoplastic White Traffic lines | 2027-07-01 → 2027-05-04 (-58d) | 2027-07-03 → 2027-05-06 (-58d) |  |  | 102d → 151.3d |  |
| A63840 | Retroreflective Thermoplastic Yellow Traffic lines | 2027-07-04 → 2027-05-06 (-59d) | 2027-07-05 → 2027-05-09 (-57d) |  |  | 102d → 151.3d |  |
| 6 | **Traffic Signage** | 2027-07-06 → 2027-05-09 (-58d) | 2027-07-19 → 2027-05-23 (-57d) |  |  |  |  |
| A63850 | Traffic signs, ground mounted, 1 Sheet Alumenium, (breakaway) Single post | 2027-07-06 → 2027-05-09 (-58d) | 2027-07-07 → 2027-05-11 (-57d) |  |  | 102d → 151.3d |  |
| A63860 | Traffic signs, ground mounted, 2 Sheet Alumenium, (breakaway) Single post | 2027-07-08 → 2027-05-11 (-58d) | 2027-07-10 → 2027-05-13 (-58d) |  |  | 102d → 151.3d |  |
| A63870 | Traffic signs, ground mounted, Sheet Alumenium, (breakaway) Double post | 2027-07-11 → 2027-05-13 (-59d) | 2027-07-12 → 2027-05-16 (-57d) |  |  | 102d → 151.3d |  |
| A63880 | Retroreflective raised pavement markers (Type A) | 2027-07-13 → 2027-05-16 (-58d) | 2027-07-14 → 2027-05-18 (-57d) |  |  | 105d → 154.3d |  |
| A63890 | Ceramic raised pavement markers | 2027-07-15 → 2027-05-18 (-58d) | 2027-07-17 → 2027-05-20 (-58d) |  |  | 105d → 154.3d |  |
| A63900 | Solar powered lighting cateyes pavement markers | 2027-07-18 → 2027-05-20 (-59d) | 2027-07-19 → 2027-05-23 (-57d) |  |  | 117d → 166.3d |  |
| LW | **LANDSCAPE WORK** | 2027-06-05 → 2027-04-10 (-56d) | 2027-12-01 → 2027-10-07 (-55d) |  |  |  |  |
| R18 | **Road 18** | 2027-06-05 → 2027-04-10 (-56d) | 2027-07-06 → 2027-05-12 (-55d) |  |  |  |  |
| 2 | **Trees/ Palms** | 2027-06-05 → 2027-04-10 (-56d) | 2027-06-20 → 2027-04-26 (-55d) |  |  |  |  |
| A64190 | Roadside tree - Cordia sebestena | 2027-06-05 → 2027-04-10 (-56d) | 2027-06-20 → 2027-04-26 (-55d) |  |  | 142d → 10.3d |  |
| A64200 | Roadside tree - Parkinsonia aculeata | 2027-06-05 → 2027-04-10 (-56d) | 2027-06-20 → 2027-04-26 (-55d) |  |  | 142d → 189.3d |  |
| A64210 | Roadside tree - Dalbergia sissoo | 2027-06-05 → 2027-04-10 (-56d) | 2027-06-20 → 2027-04-26 (-55d) |  |  | 142d → 189.3d |  |
| A64220 | Roadside tree - Acacia stenophylla | 2027-06-05 → 2027-04-10 (-56d) | 2027-06-20 → 2027-04-26 (-55d) |  |  | 142d → 189.3d |  |
| A64230 | Roadside tree - Hibiscus tiliaceus | 2027-06-05 → 2027-04-10 (-56d) | 2027-06-20 → 2027-04-26 (-55d) |  |  | 142d → 189.3d |  |
| A64240 | Roadside tree - Azadirachla indica | 2027-06-05 → 2027-04-10 (-56d) | 2027-06-20 → 2027-04-26 (-55d) |  |  | 128d → 175.3d |  |
| 3 | **Miscellaneous Landscaping Items** | 2027-06-07 → 2027-04-12 (-56d) | 2027-06-22 → 2027-04-28 (-55d) |  |  |  |  |
| A64250 | Install Precast concrete block paving for sidewalk, mixed grey colour | 2027-06-07 → 2027-04-12 (-56d) | 2027-06-22 → 2027-04-28 (-55d) |  |  | 140d → 187.3d |  |
| A64260 | Install Precast concrete block paving for main intrsection, colour light grey | 2027-06-07 → 2027-04-12 (-56d) | 2027-06-22 → 2027-04-28 (-55d) |  |  | 140d → 187.3d |  |
| A64270 | install Precast concrete block paving for main intrsection, colour mid grey | 2027-06-07 → 2027-04-12 (-56d) | 2027-06-22 → 2027-04-28 (-55d) |  |  | 140d → 187.3d |  |
| A64280 | install Precast concrete block paving for main intrsection, colour dark grey | 2027-06-07 → 2027-04-12 (-56d) | 2027-06-22 → 2027-04-28 (-55d) |  |  | 140d → 187.3d |  |
| A64290 | Gravel, mixed dark beige + medium beige + light beige | 2027-06-07 → 2027-04-12 (-56d) | 2027-06-22 → 2027-04-28 (-55d) |  |  | 140d → 187.3d |  |
| A64300 | Concrete heel kerb | 2027-06-07 → 2027-04-12 (-56d) | 2027-06-22 → 2027-04-28 (-55d) |  |  | 140d → 187.3d |  |
| 1 | **Ground Cover And Shrubs** | 2027-06-21 → 2027-04-26 (-56d) | 2027-07-06 → 2027-05-12 (-55d) |  |  |  |  |
| A64310 | Lantana montevidensis | 2027-06-21 → 2027-04-26 (-56d) | 2027-07-06 → 2027-05-12 (-55d) |  |  | 128d → 175.3d |  |
| A64320 | Portulaca grandiflora | 2027-06-21 → 2027-04-26 (-56d) | 2027-07-06 → 2027-05-12 (-55d) |  |  | 128d → 175.3d |  |
| A64330 | Dodonaea viscosa | 2027-06-21 → 2027-04-26 (-56d) | 2027-07-06 → 2027-05-12 (-55d) |  |  | 128d → 175.3d |  |
| A64340 | Atriplex halimus | 2027-06-21 → 2027-04-26 (-56d) | 2027-07-06 → 2027-05-12 (-55d) |  |  | 128d → 175.3d |  |
| R19 | **Road 19** | 2027-06-05 → 2027-04-11 (-55d) | 2027-07-06 → 2027-05-13 (-54d) |  |  |  |  |
| 2 | **Trees/ Palms** | 2027-06-05 → 2027-04-11 (-55d) | 2027-06-20 → 2027-04-27 (-54d) |  |  |  |  |
| A65070 | Roadside tree - Cordia sebestena | 2027-06-05 → 2027-04-11 (-55d) | 2027-06-20 → 2027-04-27 (-54d) |  |  | 142d → 188.3d |  |
| A65080 | Roadside tree - Parkinsonia aculeata | 2027-06-05 → 2027-04-11 (-55d) | 2027-06-20 → 2027-04-27 (-54d) |  |  | 142d → 188.3d |  |

| ID | Task | Start | Finish | Total float |
| --- | --- | --- | --- | --- |
| A65090 | Roadside tree - Dalbergia sissoo | 2027-06-05 → 2027-04-11 (-55d) | 2027-06-20 → 2027-04-27 (-54d) | 142d → 188.3d |
| A65100 | Roadside tree - Acacia stenophylla | 2027-06-05 → 2027-04-11 (-55d) | 2027-06-20 → 2027-04-27 (-54d) | 142d → 188.3d |
| A65110 | Roadside tree - Hibiscus tiliaceus | 2027-06-05 → 2027-04-11 (-55d) | 2027-06-20 → 2027-04-27 (-54d) | 142d → 188.3d |
| A65120 | Roadside tree - Azadirachla indica | 2027-06-05 → 2027-04-11 (-55d) | 2027-06-20 → 2027-04-27 (-54d) | 128d → 174.3d |
| 3 | **Miscellaneous Landscaping Items** | 2027-06-07 → 2027-04-13 (-55d) | 2027-06-22 → 2027-04-29 (-54d) |  |
| A65130 | Install Precast concrete block paving for sidewalk, mixed grey colour | 2027-06-07 → 2027-04-13 (-55d) | 2027-06-22 → 2027-04-29 (-54d) | 140d → 186.3d |
| A65140 | Install Precast concrete block paving for main intrsection, colour light grey | 2027-06-07 → 2027-04-13 (-55d) | 2027-06-22 → 2027-04-29 (-54d) | 140d → 186.3d |
| A65150 | install Precast concrete block paving for main intrsection, colour mid grey | 2027-06-07 → 2027-04-13 (-55d) | 2027-06-22 → 2027-04-29 (-54d) | 140d → 186.3d |
| A65160 | install Precast concrete block paving for main intrsection, colour dark grey | 2027-06-07 → 2027-04-13 (-55d) | 2027-06-22 → 2027-04-29 (-54d) | 140d → 186.3d |
| A65170 | Gravel, mixed dark beige + medium beige + light beige | 2027-06-07 → 2027-04-13 (-55d) | 2027-06-22 → 2027-04-29 (-54d) | 140d → 186.3d |
| A65180 | Concrete heel kerb | 2027-06-07 → 2027-04-13 (-55d) | 2027-06-22 → 2027-04-29 (-54d) | 140d → 186.3d |
| 1 | **Ground Cover And Shrubs** | 2027-06-21 → 2027-04-27 (-55d) | 2027-07-06 → 2027-05-13 (-54d) |  |
| A65030 | Lantana montevidensis | 2027-06-21 → 2027-04-27 (-55d) | 2027-07-06 → 2027-05-13 (-54d) | 128d → 174.3d |
| A65040 | Portulaca grandiflora | 2027-06-21 → 2027-04-27 (-55d) | 2027-07-06 → 2027-05-13 (-54d) | 128d → 174.3d |
| A65050 | Dodonaea viscosa | 2027-06-21 → 2027-04-27 (-55d) | 2027-07-06 → 2027-05-13 (-54d) | 128d → 174.3d |
| A65060 | Atriplex halimus | 2027-06-21 → 2027-04-27 (-55d) | 2027-07-06 → 2027-05-13 (-54d) | 128d → 174.3d |
| R20 | **Road 20** | 2027-06-07 → 2027-04-13 (-55d) | 2027-07-08 → 2027-05-16 (-53d) |  |
| 2 | **Trees/ Palms** | 2027-06-07 → 2027-04-13 (-55d) | 2027-06-22 → 2027-04-29 (-54d) |  |
| A65230 | Roadside tree - Cordia sebestena | 2027-06-07 → 2027-04-13 (-55d) | 2027-06-22 → 2027-04-29 (-54d) | 140d → 186.3d |
| A65240 | Roadside tree - Parkinsonia aculeata | 2027-06-07 → 2027-04-13 (-55d) | 2027-06-22 → 2027-04-29 (-54d) | 140d → 186.3d |
| A65250 | Roadside tree - Dalbergia sissoo | 2027-06-07 → 2027-04-13 (-55d) | 2027-06-22 → 2027-04-29 (-54d) | 140d → 186.3d |
| A65260 | Roadside tree - Acacia stenophylla | 2027-06-07 → 2027-04-13 (-55d) | 2027-06-22 → 2027-04-29 (-54d) | 140d → 186.3d |
| A65270 | Roadside tree - Hibiscus tiliaceus | 2027-06-07 → 2027-04-13 (-55d) | 2027-06-22 → 2027-04-29 (-54d) | 140d → 186.3d |
| A65280 | Roadside tree - Azadirachla indica | 2027-06-07 → 2027-04-13 (-55d) | 2027-06-22 → 2027-04-29 (-54d) | 126d → 172.3d |
| 3 | **Miscellaneous Landscaping Items** | 2027-06-09 → 2027-04-15 (-55d) | 2027-06-24 → 2027-05-02 (-53d) |  |
| A65290 | Install Precast concrete block paving for sidewalk, mixed grey colour | 2027-06-09 → 2027-04-15 (-55d) | 2027-06-24 → 2027-05-02 (-53d) | 138d → 184.3d |
| A65300 | Install Precast concrete block paving for main intrsection, colour light grey | 2027-06-09 → 2027-04-15 (-55d) | 2027-06-24 → 2027-05-02 (-53d) | 138d → 184.3d |
| A65310 | install Precast concrete block paving for main intrsection, colour mid grey | 2027-06-09 → 2027-04-15 (-55d) | 2027-06-24 → 2027-05-02 (-53d) | 138d → 184.3d |
| A65320 | install Precast concrete block paving for main intrsection, colour dark grey | 2027-06-09 → 2027-04-15 (-55d) | 2027-06-24 → 2027-05-02 (-53d) | 138d → 184.3d |
| A65330 | Gravel, mixed dark beige + medium beige + light beige | 2027-06-09 → 2027-04-15 (-55d) | 2027-06-24 → 2027-05-02 (-53d) | 138d → 184.3d |
| A65340 | Concrete heel kerb | 2027-06-09 → 2027-04-15 (-55d) | 2027-06-24 → 2027-05-02 (-53d) | 138d → 184.3d |
| 1 | **Ground Cover And Shrubs** | 2027-06-23 → 2027-04-29 (-55d) | 2027-07-08 → 2027-05-16 (-53d) |  |
| A65190 | Lantana montevidensis | 2027-06-23 → 2027-04-29 (-55d) | 2027-07-08 → 2027-05-16 (-53d) | 126d → 172.3d |
| A65200 | Portulaca grandiflora | 2027-06-23 → 2027-04-29 (-55d) | 2027-07-08 → 2027-05-16 (-53d) | 126d → 172.3d |
| A65210 | Dodonaea viscosa | 2027-06-23 → 2027-04-29 (-55d) | 2027-07-08 → 2027-05-16 (-53d) | 126d → 172.3d |
| A65220 | Atriplex halimus | 2027-06-23 → 2027-04-29 (-55d) | 2027-07-08 → 2027-05-16 (-53d) | 126d → 172.3d |
| R21 | **Road 21** | 2027-06-07 → 2027-04-14 (-54d) | 2027-07-08 → 2027-05-17 (-52d) |  |
| 2 | **Trees/ Palms** | 2027-06-07 → 2027-04-14 (-54d) | 2027-06-22 → 2027-05-01 (-52d) |  |
| A65390 | Roadside tree - Cordia sebestena | 2027-06-07 → 2027-04-14 (-54d) | 2027-06-22 → 2027-05-01 (-52d) | 140d → 185.3d |
| A65400 | Roadside tree - Parkinsonia aculeata | 2027-06-07 → 2027-04-14 (-54d) | 2027-06-22 → 2027-05-01 (-52d) | 140d → 185.3d |
| A65410 | Roadside tree - Dalbergia sissoo | 2027-06-07 → 2027-04-14 (-54d) | 2027-06-22 → 2027-05-01 (-52d) | 140d → 185.3d |
| A65420 | Roadside tree - Acacia stenophylla | 2027-06-07 → 2027-04-14 (-54d) | 2027-06-22 → 2027-05-01 (-52d) | 140d → 185.3d |
| A65430 | Roadside tree - Hibiscus tiliaceus | 2027-06-07 → 2027-04-14 (-54d) | 2027-06-22 → 2027-05-01 (-52d) | 140d → 185.3d |
| A65440 | Roadside tree - Azadirachla indica | 2027-06-07 → 2027-04-14 (-54d) | 2027-06-22 → 2027-05-01 (-52d) | 126d → 171.3d |
| 3 | **Miscellaneous Landscaping Items** | 2027-06-09 → 2027-04-17 (-53d) | 2027-06-24 → 2027-05-03 (-52d) |  |
| A65450 | Install Precast concrete block paving for sidewalk, mixed grey colour | 2027-06-09 → 2027-04-17 (-53d) | 2027-06-24 → 2027-05-03 (-52d) | 138d → 183.3d |
| A65460 | Install Precast concrete block paving for main intrsection, colour light grey | 2027-06-09 → 2027-04-17 (-53d) | 2027-06-24 → 2027-05-03 (-52d) | 138d → 183.3d |
| A65470 | install Precast concrete block paving for main intrsection, colour mid grey | 2027-06-09 → 2027-04-17 (-53d) | 2027-06-24 → 2027-05-03 (-52d) | 138d → 183.3d |
| A65480 | install Precast concrete block paving for main intrsection, colour dark grey | 2027-06-09 → 2027-04-17 (-53d) | 2027-06-24 → 2027-05-03 (-52d) | 138d → 183.3d |
| A65490 | Gravel, mixed dark beige + medium beige + light beige | 2027-06-09 → 2027-04-17 (-53d) | 2027-06-24 → 2027-05-03 (-52d) | 138d → 183.3d |
| A65500 | Concrete heel kerb | 2027-06-09 → 2027-04-17 (-53d) | 2027-06-24 → 2027-05-03 (-52d) | 138d → 183.3d |
| 1 | **Ground Cover And Shrubs** | 2027-06-23 → 2027-05-01 (-53d) | 2027-07-08 → 2027-05-17 (-52d) |  |
| A65350 | Lantana montevidensis | 2027-06-23 → 2027-05-01 (-53d) | 2027-07-08 → 2027-05-17 (-52d) | 126d → 171.3d |
| A65360 | Portulaca grandiflora | 2027-06-23 → 2027-05-01 (-53d) | 2027-07-08 → 2027-05-17 (-52d) | 126d → 171.3d |
| A65370 | Dodonaea viscosa | 2027-06-23 → 2027-05-01 (-53d) | 2027-07-08 → 2027-05-17 (-52d) | 126d → 171.3d |
| A65380 | Atriplex halimus | 2027-06-23 → 2027-05-01 (-53d) | 2027-07-08 → 2027-05-17 (-52d) | 126d → 171.3d |
| R22 | **Road 22** | 2027-06-05 → 2027-04-15 (-51d) | 2027-07-06 → 2027-05-18 (-49d) |  |
| 2 | **Trees/ Palms** | 2027-06-05 → 2027-04-15 (-51d) | 2027-06-20 → 2027-05-02 (-49d) |  |
| A65550 | Roadside tree - Cordia sebestena | 2027-06-05 → 2027-04-15 (-51d) | 2027-06-20 → 2027-05-02 (-49d) | 142d → 184.3d |
| A65560 | Roadside tree - Parkinsonia aculeata | 2027-06-05 → 2027-04-15 (-51d) | 2027-06-20 → 2027-05-02 (-49d) | 142d → 184.3d |
| A65570 | Roadside tree - Dalbergia sissoo | 2027-06-05 → 2027-04-15 (-51d) | 2027-06-20 → 2027-05-02 (-49d) | 142d → 184.3d |
| A65580 | Roadside tree - Acacia stenophylla | 2027-06-05 → 2027-04-15 (-51d) | 2027-06-20 → 2027-05-02 (-49d) | 142d → 184.3d |
| A65590 | Roadside tree - Hibiscus tiliaceus | 2027-06-05 → 2027-04-15 (-51d) | 2027-06-20 → 2027-05-02 (-49d) | 142d → 184.3d |
| A65600 | Roadside tree - Azadirachla indica | 2027-06-05 → 2027-04-15 (-51d) | 2027-06-20 → 2027-05-02 (-49d) | 128d → 170.3d |
| 3 | **Miscellaneous Landscaping Items** | 2027-06-07 → 2027-04-18 (-50d) | 2027-06-22 → 2027-05-04 (-49d) |  |
| A65610 | Install Precast concrete block paving for sidewalk, mixed grey colour | 2027-06-07 → 2027-04-18 (-50d) | 2027-06-22 → 2027-05-04 (-49d) | 140d → 182.3d |
| A65620 | Install Precast concrete block paving for main intrsection, colour light grey | 2027-06-07 → 2027-04-18 (-50d) | 2027-06-22 → 2027-05-04 (-49d) | 140d → 182.3d |
| A65630 | install Precast concrete block paving for main intrsection, colour mid grey | 2027-06-07 → 2027-04-18 (-50d) | 2027-06-22 → 2027-05-04 (-49d) | 140d → 182.3d |
| A65640 | install Precast concrete block paving for main intrsection, colour dark grey | 2027-06-07 → 2027-04-18 (-50d) | 2027-06-22 → 2027-05-04 (-49d) | 140d → 182.3d |
| A65650 | Gravel, mixed dark beige + medium beige + light beige | 2027-06-07 → 2027-04-18 (-50d) | 2027-06-22 → 2027-05-04 (-49d) | 140d → 182.3d |

| ID | Task | Start | Finish | Total float |
| --- | --- | --- | --- | --- |
| A65660 | Concrete heel kerb | 2027-06-07 → 2027-04-18 (-50d) | 2027-06-22 → 2027-05-04 (-49d) | 140d → 182.3d |
| 1 | **Ground Cover And Shrubs** | 2027-06-21 → 2027-05-02 (-50d) | 2027-07-06 → 2027-05-18 (-49d) |  |
| A65510 | Lantana montevidensis | 2027-06-21 → 2027-05-02 (-50d) | 2027-07-06 → 2027-05-18 (-49d) | 128d → 170.3d |
| A65520 | Portulaca grandiflora | 2027-06-21 → 2027-05-02 (-50d) | 2027-07-06 → 2027-05-18 (-49d) | 128d → 170.3d |
| A65530 | Dodonaea viscosa | 2027-06-21 → 2027-05-02 (-50d) | 2027-07-06 → 2027-05-18 (-49d) | 128d → 170.3d |
| A65540 | Atriplex halimus | 2027-06-21 → 2027-05-02 (-50d) | 2027-07-06 → 2027-05-18 (-49d) | 128d → 170.3d |
| R23 | **Road 23** | 2027-06-05 → 2027-04-17 (-49d) | 2027-07-06 → 2027-05-19 (-48d) |  |
| 2 | **Trees/ Palms** | 2027-06-05 → 2027-04-17 (-49d) | 2027-06-20 → 2027-05-03 (-48d) |  |
| A65710 | Roadside tree - Cordia sebestena | 2027-06-05 → 2027-04-17 (-49d) | 2027-06-20 → 2027-05-03 (-48d) | 142d → 183.3d |
| A65720 | Roadside tree - Parkinsonia aculeata | 2027-06-05 → 2027-04-17 (-49d) | 2027-06-20 → 2027-05-03 (-48d) | 142d → 183.3d |
| A65730 | Roadside tree - Dalbergia sissoo | 2027-06-05 → 2027-04-17 (-49d) | 2027-06-20 → 2027-05-03 (-48d) | 142d → 183.3d |
| A65740 | Roadside tree - Acacia stenophylla | 2027-06-05 → 2027-04-17 (-49d) | 2027-06-20 → 2027-05-03 (-48d) | 142d → 183.3d |
| A65750 | Roadside tree - Hibiscus tiliaceus | 2027-06-05 → 2027-04-17 (-49d) | 2027-06-20 → 2027-05-03 (-48d) | 142d → 183.3d |
| A65760 | Roadside tree - Azadirachla indica | 2027-06-05 → 2027-04-17 (-49d) | 2027-06-20 → 2027-05-03 (-48d) | 128d → 169.3d |
| 3 | **Miscellaneous Landscaping Items** | 2027-06-07 → 2027-04-19 (-49d) | 2027-06-22 → 2027-05-05 (-48d) |  |
| A65770 | Install Precast concrete block paving for sidewalk, mixed grey colour | 2027-06-07 → 2027-04-19 (-49d) | 2027-06-22 → 2027-05-05 (-48d) | 140d → 181.3d |
| A65780 | Install Precast concrete block paving for main intrsection, colour light grey | 2027-06-07 → 2027-04-19 (-49d) | 2027-06-22 → 2027-05-05 (-48d) | 140d → 181.3d |
| A65790 | install Precast concrete block paving for main intrsection, colour mid grey | 2027-06-07 → 2027-04-19 (-49d) | 2027-06-22 → 2027-05-05 (-48d) | 140d → 181.3d |
| A65800 | install Precast concrete block paving for main intrsection, colour dark grey | 2027-06-07 → 2027-04-19 (-49d) | 2027-06-22 → 2027-05-05 (-48d) | 140d → 181.3d |
| A65810 | Gravel, mixed dark beige + medium beige + light beige | 2027-06-07 → 2027-04-19 (-49d) | 2027-06-22 → 2027-05-05 (-48d) | 140d → 181.3d |
| A65820 | Concrete heel kerb | 2027-06-07 → 2027-04-19 (-49d) | 2027-06-22 → 2027-05-05 (-48d) | 140d → 181.3d |
| 1 | **Ground Cover And Shrubs** | 2027-06-21 → 2027-05-03 (-49d) | 2027-07-06 → 2027-05-19 (-48d) |  |
| A65670 | Lantana montevidensis | 2027-06-21 → 2027-05-03 (-49d) | 2027-07-06 → 2027-05-19 (-48d) | 128d → 169.3d |
| A65680 | Portulaca grandiflora | 2027-06-21 → 2027-05-03 (-49d) | 2027-07-06 → 2027-05-19 (-48d) | 128d → 169.3d |
| A65690 | Dodonaea viscosa | 2027-06-21 → 2027-05-03 (-49d) | 2027-07-06 → 2027-05-19 (-48d) | 128d → 169.3d |
| A65700 | Atriplex halimus | 2027-06-21 → 2027-05-03 (-49d) | 2027-07-06 → 2027-05-19 (-48d) | 128d → 169.3d |
| R24 | **Road 24** | 2027-06-06 → 2027-04-19 (-48d) | 2027-07-07 → 2027-05-22 (-46d) |  |
| 2 | **Trees/ Palms** | 2027-06-06 → 2027-04-19 (-48d) | 2027-06-21 → 2027-05-05 (-47d) |  |
| A65870 | Roadside tree - Cordia sebestena | 2027-06-06 → 2027-04-19 (-48d) | 2027-06-21 → 2027-05-05 (-47d) | 141d → 181.3d |
| A65880 | Roadside tree - Parkinsonia aculeata | 2027-06-06 → 2027-04-19 (-48d) | 2027-06-21 → 2027-05-05 (-47d) | 141d → 181.3d |
| A65890 | Roadside tree - Dalbergia sissoo | 2027-06-06 → 2027-04-19 (-48d) | 2027-06-21 → 2027-05-05 (-47d) | 141d → 181.3d |
| A65900 | Roadside tree - Acacia stenophylla | 2027-06-06 → 2027-04-19 (-48d) | 2027-06-21 → 2027-05-05 (-47d) | 141d → 181.3d |
| A65910 | Roadside tree - Hibiscus tiliaceus | 2027-06-06 → 2027-04-19 (-48d) | 2027-06-21 → 2027-05-05 (-47d) | 141d → 181.3d |
| A65920 | Roadside tree - Azadirachla indica | 2027-06-06 → 2027-04-19 (-48d) | 2027-06-21 → 2027-05-05 (-47d) | 127d → 167.3d |
| 3 | **Miscellaneous Landscaping Items** | 2027-06-08 → 2027-04-21 (-48d) | 2027-06-23 → 2027-05-08 (-46d) |  |
| A65930 | Install Precast concrete block paving for sidewalk, mixed grey colour | 2027-06-08 → 2027-04-21 (-48d) | 2027-06-23 → 2027-05-08 (-46d) | 139d → 179.3d |
| A65940 | Install Precast concrete block paving for main intrsection, colour light grey | 2027-06-08 → 2027-04-21 (-48d) | 2027-06-23 → 2027-05-08 (-46d) | 139d → 179.3d |
| A65950 | install Precast concrete block paving for main intrsection, colour mid grey | 2027-06-08 → 2027-04-21 (-48d) | 2027-06-23 → 2027-05-08 (-46d) | 139d → 179.3d |
| A65960 | install Precast concrete block paving for main intrsection, colour dark grey | 2027-06-08 → 2027-04-21 (-48d) | 2027-06-23 → 2027-05-08 (-46d) | 139d → 179.3d |
| A65970 | Gravel, mixed dark beige + medium beige + light beige | 2027-06-08 → 2027-04-21 (-48d) | 2027-06-23 → 2027-05-08 (-46d) | 139d → 179.3d |
| A65980 | Concrete heel kerb | 2027-06-08 → 2027-04-21 (-48d) | 2027-06-23 → 2027-05-08 (-46d) | 139d → 179.3d |
| 1 | **Ground Cover And Shrubs** | 2027-06-22 → 2027-05-05 (-48d) | 2027-07-07 → 2027-05-22 (-46d) |  |
| A65830 | Lantana montevidensis | 2027-06-22 → 2027-05-05 (-48d) | 2027-07-07 → 2027-05-22 (-46d) | 127d → 167.3d |
| A65840 | Portulaca grandiflora | 2027-06-22 → 2027-05-05 (-48d) | 2027-07-07 → 2027-05-22 (-46d) | 127d → 167.3d |
| A65850 | Dodonaea viscosa | 2027-06-22 → 2027-05-05 (-48d) | 2027-07-07 → 2027-05-22 (-46d) | 127d → 167.3d |
| A65860 | Atriplex halimus | 2027-06-22 → 2027-05-05 (-48d) | 2027-07-07 → 2027-05-22 (-46d) | 127d → 167.3d |
| R25 | **Road 25** | 2027-06-07 → 2027-04-22 (-46d) | 2027-06-26 → 2027-05-12 (-45d) |  |
| 2 | **Trees/ Palms** | 2027-06-07 → 2027-04-22 (-46d) | 2027-06-22 → 2027-05-09 (-44d) |  |
| A66030 | Roadside tree - Cordia sebestena | 2027-06-07 → 2027-04-22 (-46d) | 2027-06-22 → 2027-05-09 (-44d) | 140d → 178.3d |
| A66040 | Roadside tree - Parkinsonia aculeata | 2027-06-07 → 2027-04-22 (-46d) | 2027-06-22 → 2027-05-09 (-44d) | 140d → 178.3d |
| A66050 | Roadside tree - Dalbergia sissoo | 2027-06-07 → 2027-04-22 (-46d) | 2027-06-22 → 2027-05-09 (-44d) | 140d → 178.3d |
| A66060 | Roadside tree - Acacia stenophylla | 2027-06-07 → 2027-04-22 (-46d) | 2027-06-22 → 2027-05-09 (-44d) | 140d → 178.3d |
| A66070 | Roadside tree - Hibiscus tiliaceus | 2027-06-07 → 2027-04-22 (-46d) | 2027-06-22 → 2027-05-09 (-44d) | 140d → 178.3d |
| A66080 | Roadside tree - Azadirachla indica | 2027-06-07 → 2027-04-22 (-46d) | 2027-06-22 → 2027-05-09 (-44d) | 137d → 175.3d |
| 3 | **Miscellaneous Landscaping Items** | 2027-06-09 → 2027-04-25 (-45d) | 2027-06-12 → 2027-04-28 (-45d) |  |
| A66090 | Install Precast concrete block paving for sidewalk, mixed grey colour | 2027-06-09 → 2027-04-25 (-45d) | 2027-06-12 → 2027-04-28 (-45d) | 149d → 187.3d |
| A66100 | Install Precast concrete block paving for main intrsection, colour light grey | 2027-06-09 → 2027-04-25 (-45d) | 2027-06-12 → 2027-04-28 (-45d) | 149d → 187.3d |
| A66110 | install Precast concrete block paving for main intrsection, colour mid grey | 2027-06-09 → 2027-04-25 (-45d) | 2027-06-12 → 2027-04-28 (-45d) | 149d → 187.3d |
| A66120 | install Precast concrete block paving for main intrsection, colour dark grey | 2027-06-09 → 2027-04-25 (-45d) | 2027-06-12 → 2027-04-28 (-45d) | 149d → 187.3d |
| A66130 | Gravel, mixed dark beige + medium beige + light beige | 2027-06-09 → 2027-04-25 (-45d) | 2027-06-12 → 2027-04-28 (-45d) | 149d → 187.3d |
| A66140 | Concrete heel kerb | 2027-06-09 → 2027-04-25 (-45d) | 2027-06-12 → 2027-04-28 (-45d) | 149d → 187.3d |
| 1 | **Ground Cover And Shrubs** | 2027-06-23 → 2027-05-09 (-45d) | 2027-06-26 → 2027-05-12 (-45d) |  |
| A65990 | Lantana montevidensis | 2027-06-23 → 2027-05-09 (-45d) | 2027-06-26 → 2027-05-12 (-45d) | 137d → 175.3d |
| A66000 | Portulaca grandiflora | 2027-06-23 → 2027-05-09 (-45d) | 2027-06-26 → 2027-05-12 (-45d) | 137d → 175.3d |
| A66010 | Dodonaea viscosa | 2027-06-23 → 2027-05-09 (-45d) | 2027-06-26 → 2027-05-12 (-45d) | 137d → 175.3d |
| A66020 | Atriplex halimus | 2027-06-23 → 2027-05-09 (-45d) | 2027-06-26 → 2027-05-12 (-45d) | 137d → 175.3d |
| R251 | **Road 26** | 2027-06-07 → 2027-04-27 (-41d) | 2027-07-08 → 2027-05-30 (-39d) |  |
| 2 | **Trees/ Palms** | 2027-06-07 → 2027-04-27 (-41d) | 2027-06-22 → 2027-05-13 (-40d) |  |
| A66790 | Roadside tree - Cordia sebestena | 2027-06-07 → 2027-04-27 (-41d) | 2027-06-22 → 2027-05-13 (-40d) | 140d → 174.3d |
| A66800 | Roadside tree - Parkinsonia aculeata | 2027-06-07 → 2027-04-27 (-41d) | 2027-06-22 → 2027-05-13 (-40d) | 140d → 174.3d |

| ID | Task | Start | Finish | Total float |
| --- | --- | --- | --- | --- |
| A66810 | Roadside tree - Dalbergia sissoo | 2027-06-07 → 2027-04-27 (-41d) | 2027-06-22 → 2027-05-13 (-40d) | 140d → 174.3d |
| A66820 | Roadside tree - Acacia stenophylla | 2027-06-07 → 2027-04-27 (-41d) | 2027-06-22 → 2027-05-13 (-40d) | 140d → 174.3d |
| A66830 | Roadside tree - Hibiscus tiliaceus | 2027-06-07 → 2027-04-27 (-41d) | 2027-06-22 → 2027-05-13 (-40d) | 140d → 174.3d |
| A66840 | Roadside tree - Azadirachla indica | 2027-06-07 → 2027-04-27 (-41d) | 2027-06-22 → 2027-05-13 (-40d) | 126d → 160.3d |
| 3 | **Miscellaneous Landscaping Items** | 2027-06-07 → 2027-04-27 (-41d) | 2027-06-22 → 2027-05-13 (-40d) |  |
| A66850 | Install Precast concrete block paving for sidewalk, mixed grey colour | 2027-06-07 → 2027-04-27 (-41d) | 2027-06-22 → 2027-05-13 (-40d) | 140d → 174.3d |
| A66860 | Install Precast concrete block paving for main intrsection, colour light grey | 2027-06-07 → 2027-04-27 (-41d) | 2027-06-22 → 2027-05-13 (-40d) | 140d → 174.3d |
| A66870 | install Precast concrete block paving for main intrsection, colour mid grey | 2027-06-07 → 2027-04-27 (-41d) | 2027-06-22 → 2027-05-13 (-40d) | 140d → 174.3d |
| A66880 | install Precast concrete block paving for main intrsection, colour dark grey | 2027-06-07 → 2027-04-27 (-41d) | 2027-06-22 → 2027-05-13 (-40d) | 140d → 174.3d |
| A66890 | Gravel, mixed dark beige + medium beige + light beige | 2027-06-07 → 2027-04-27 (-41d) | 2027-06-22 → 2027-05-13 (-40d) | 140d → 174.3d |
| A66900 | Concrete heel kerb | 2027-06-07 → 2027-04-27 (-41d) | 2027-06-22 → 2027-05-13 (-40d) | 140d → 174.3d |
| 1 | **Ground Cover And Shrubs** | 2027-06-23 → 2027-05-13 (-41d) | 2027-07-08 → 2027-05-30 (-39d) |  |
| A66750 | Lantana montevidensis | 2027-06-23 → 2027-05-13 (-41d) | 2027-07-08 → 2027-05-30 (-39d) | 126d → 160.3d |
| A66760 | Portulaca grandiflora | 2027-06-23 → 2027-05-13 (-41d) | 2027-07-08 → 2027-05-30 (-39d) | 126d → 160.3d |
| A66770 | Dodonaea viscosa | 2027-06-23 → 2027-05-13 (-41d) | 2027-07-08 → 2027-05-30 (-39d) | 126d → 160.3d |
| A66780 | Atriplex halimus | 2027-06-23 → 2027-05-13 (-41d) | 2027-07-08 → 2027-05-30 (-39d) | 126d → 160.3d |
| R2511 | **Road 27** | 2027-06-07 → 2027-04-29 (-39d) | 2027-07-08 → 2027-06-01 (-37d) |  |
| 2 | **Trees/ Palms** | 2027-06-07 → 2027-04-29 (-39d) | 2027-06-22 → 2027-05-16 (-37d) |  |
| A66950 | Roadside tree - Cordia sebestena | 2027-06-07 → 2027-04-29 (-39d) | 2027-06-22 → 2027-05-16 (-37d) | 140d → 172.3d |
| A66960 | Roadside tree - Parkinsonia aculeata | 2027-06-07 → 2027-04-29 (-39d) | 2027-06-22 → 2027-05-16 (-37d) | 140d → 172.3d |
| A66970 | Roadside tree - Dalbergia sissoo | 2027-06-07 → 2027-04-29 (-39d) | 2027-06-22 → 2027-05-16 (-37d) | 140d → 172.3d |
| A66980 | Roadside tree - Acacia stenophylla | 2027-06-07 → 2027-04-29 (-39d) | 2027-06-22 → 2027-05-16 (-37d) | 140d → 172.3d |
| A66990 | Roadside tree - Hibiscus tiliaceus | 2027-06-07 → 2027-04-29 (-39d) | 2027-06-22 → 2027-05-16 (-37d) | 140d → 172.3d |
| A67000 | Roadside tree - Azadirachla indica | 2027-06-07 → 2027-04-29 (-39d) | 2027-06-22 → 2027-05-16 (-37d) | 126d → 158.3d |
| 3 | **Miscellaneous Landscaping Items** | 2027-06-09 → 2027-05-02 (-38d) | 2027-06-24 → 2027-05-18 (-37d) |  |
| A67010 | Install Precast concrete block paving for sidewalk, mixed grey colour | 2027-06-09 → 2027-05-02 (-38d) | 2027-06-24 → 2027-05-18 (-37d) | 138d → 170.3d |
| A67020 | Install Precast concrete block paving for main intrsection, colour light grey | 2027-06-09 → 2027-05-02 (-38d) | 2027-06-24 → 2027-05-18 (-37d) | 138d → 170.3d |
| A67030 | install Precast concrete block paving for main intrsection, colour mid grey | 2027-06-09 → 2027-05-02 (-38d) | 2027-06-24 → 2027-05-18 (-37d) | 138d → 170.3d |
| A67040 | install Precast concrete block paving for main intrsection, colour dark grey | 2027-06-09 → 2027-05-02 (-38d) | 2027-06-24 → 2027-05-18 (-37d) | 138d → 170.3d |
| A67050 | Gravel, mixed dark beige + medium beige + light beige | 2027-06-09 → 2027-05-02 (-38d) | 2027-06-24 → 2027-05-18 (-37d) | 138d → 170.3d |
| A67060 | Concrete heel kerb | 2027-06-09 → 2027-05-02 (-38d) | 2027-06-24 → 2027-05-18 (-37d) | 138d → 170.3d |
| 1 | **Ground Cover And Shrubs** | 2027-06-23 → 2027-05-16 (-38d) | 2027-07-08 → 2027-06-01 (-37d) |  |
| A66910 | Lantana montevidensis | 2027-06-23 → 2027-05-16 (-38d) | 2027-07-08 → 2027-06-01 (-37d) | 126d → 158.3d |
| A66920 | Portulaca grandiflora | 2027-06-23 → 2027-05-16 (-38d) | 2027-07-08 → 2027-06-01 (-37d) | 126d → 158.3d |
| A66930 | Dodonaea viscosa | 2027-06-23 → 2027-05-16 (-38d) | 2027-07-08 → 2027-06-01 (-37d) | 126d → 158.3d |
| A66940 | Atriplex halimus | 2027-06-23 → 2027-05-16 (-38d) | 2027-07-08 → 2027-06-01 (-37d) | 126d → 158.3d |
| CO2 | **Collector 2** | 2027-06-23 → 2027-05-01 (-53d) | 2027-07-25 → 2027-06-02 (-53d) |  |
| 2 | **Trees/ Palms** | 2027-06-23 → 2027-05-01 (-53d) | 2027-07-08 → 2027-05-17 (-52d) |  |
| A66190 | Roadside tree - Cordia sebestena | 2027-06-23 → 2027-05-01 (-53d) | 2027-07-08 → 2027-05-17 (-52d) | 126d → 171.3d |
| A66200 | Roadside tree - Parkinsonia aculeata | 2027-06-23 → 2027-05-01 (-53d) | 2027-07-08 → 2027-05-17 (-52d) | 126d → 171.3d |
| A66210 | Roadside tree - Dalbergia sissoo | 2027-06-23 → 2027-05-01 (-53d) | 2027-07-08 → 2027-05-17 (-52d) | 126d → 171.3d |
| A66220 | Roadside tree - Acacia stenophylla | 2027-06-23 → 2027-05-01 (-53d) | 2027-07-08 → 2027-05-17 (-52d) | 126d → 171.3d |
| A66230 | Roadside tree - Hibiscus tiliaceus | 2027-06-23 → 2027-05-01 (-53d) | 2027-07-08 → 2027-05-17 (-52d) | 126d → 171.3d |
| A66240 | Roadside tree - Azadirachla indica | 2027-06-23 → 2027-05-01 (-53d) | 2027-07-08 → 2027-05-17 (-52d) | 112d → 157.3d |
| 3 | **Miscellaneous Landscaping Items** | 2027-06-28 → 2027-05-05 (-54d) | 2027-07-13 → 2027-05-22 (-52d) |  |
| A66250 | Install Precast concrete block paving for sidewalk, mixed grey colour | 2027-06-28 → 2027-05-05 (-54d) | 2027-07-13 → 2027-05-22 (-52d) | 122d → 167.3d |
| A66260 | Install Precast concrete block paving for main intrsection, colour light grey | 2027-06-28 → 2027-05-05 (-54d) | 2027-07-13 → 2027-05-22 (-52d) | 122d → 167.3d |
| A66270 | install Precast concrete block paving for main intrsection, colour mid grey | 2027-06-28 → 2027-05-05 (-54d) | 2027-07-13 → 2027-05-22 (-52d) | 122d → 167.3d |
| A66280 | install Precast concrete block paving for main intrsection, colour dark grey | 2027-06-28 → 2027-05-05 (-54d) | 2027-07-13 → 2027-05-22 (-52d) | 122d → 167.3d |
| A66290 | Gravel, mixed dark beige + medium beige + light beige | 2027-06-28 → 2027-05-05 (-54d) | 2027-07-13 → 2027-05-22 (-52d) | 122d → 167.3d |
| A66300 | Concrete heel kerb | 2027-06-28 → 2027-05-05 (-54d) | 2027-07-13 → 2027-05-22 (-52d) | 122d → 167.3d |
| 1 | **Ground Cover And Shrubs** | 2027-07-10 → 2027-05-17 (-54d) | 2027-07-25 → 2027-06-02 (-53d) |  |
| A66150 | Lantana montevidensis | 2027-07-10 → 2027-05-17 (-54d) | 2027-07-25 → 2027-06-02 (-53d) | 112d → 157.3d |
| A66160 | Portulaca grandiflora | 2027-07-10 → 2027-05-17 (-54d) | 2027-07-25 → 2027-06-02 (-53d) | 112d → 157.3d |
| A66170 | Dodonaea viscosa | 2027-07-10 → 2027-05-17 (-54d) | 2027-07-25 → 2027-06-02 (-53d) | 112d → 157.3d |
| A66180 | Atriplex halimus | 2027-07-10 → 2027-05-17 (-54d) | 2027-07-25 → 2027-06-02 (-53d) | 112d → 157.3d |
| AR1 | **Arterial 1** | 2027-07-05 → 2027-05-10 (-56d) | 2027-12-01 → 2027-10-07 (-55d) |  |
| 2 | **Trees/ Palms** | 2027-07-05 → 2027-05-10 (-56d) | 2027-09-27 → 2027-08-03 (-55d) |  |
| A66350 | Roadside tree - Cordia sebestena | 2027-07-05 → 2027-05-10 (-56d) | 2027-07-20 → 2027-05-26 (-55d) | 1d → 48.3d |
| A66360 | Roadside tree - Parkinsonia aculeata | 2027-07-21 → 2027-05-26 (-56d) | 2027-07-24 → 2027-05-30 (-55d) | 1d → 48.3d |
| A66370 | Roadside tree - Dalbergia sissoo | 2027-07-25 → 2027-05-30 (-56d) | 2027-08-09 → 2027-06-15 (-55d) | 1d → 48.3d |
| A66380 | Roadside tree - Acacia stenophylla | 2027-08-10 → 2027-06-15 (-56d) | 2027-08-25 → 2027-07-01 (-55d) | 1d → 48.3d |
| A66390 | Roadside tree - Hibiscus tiliaceus | 2027-08-26 → 2027-07-01 (-56d) | 2027-09-11 → 2027-07-18 (-55d) | 1d → 48.3d |
| A66400 | Roadside tree - Azadirachla indica | 2027-09-12 → 2027-07-18 (-56d) | 2027-09-27 → 2027-08-03 (-55d) | 1d → 48.3d |
| 3 | **Miscellaneous Landscaping Items** | 2027-07-14 → 2027-05-19 (-56d) | 2027-10-19 → 2027-08-25 (-55d) |  |
| A66410 | Install Precast concrete block paving for sidewalk, mixed grey colour | 2027-07-14 → 2027-05-19 (-56d) | 2027-07-29 → 2027-06-05 (-54d) | 38d → 85.3d |
| A66420 | Install Precast concrete block paving for main intrsection, colour light grey | 2027-07-31 → 2027-06-05 (-56d) | 2027-08-15 → 2027-06-21 (-55d) | 38d → 85.3d |
| A66430 | install Precast concrete block paving for main intrsection, colour mid grey | 2027-08-16 → 2027-06-21 (-56d) | 2027-08-31 → 2027-07-07 (-55d) | 38d → 85.3d |
| A66440 | install Precast concrete block paving for main intrsection, colour dark grey | 2027-09-01 → 2027-07-07 (-56d) | 2027-09-16 → 2027-07-24 (-54d) | 38d → 85.3d |
| A66450 | Gravel, mixed dark beige + medium beige + light beige | 2027-09-18 → 2027-07-24 (-56d) | 2027-10-03 → 2027-08-09 (-55d) | 38d → 85.3d |

| ID | Task | Start | Finish | Complete | Total float | Predecessors |
| --- | --- | --- | --- | --- | --- | --- |
| A66460 | Concrete heel kerb | 2027-10-04 → 2027-08-09 (-56d) | 2027-10-19 → 2027-08-25 (-55d) |  | 38d → 85.3d |  |
| 1 | **Ground Cover And Shrubs** | 2027-09-28 → 2027-08-03 (-56d) | 2027-12-01 → 2027-10-07 (-55d) |  |  |  |
| A66310 | Lantana montevidensis | 2027-09-28 → 2027-08-03 (-56d) | 2027-10-13 → 2027-08-19 (-55d) |  | 1d → 48.3d |  |
| A66320 | Portulaca grandiflora | 2027-10-14 → 2027-08-19 (-56d) | 2027-10-30 → 2027-09-05 (-55d) |  | 1d → 48.3d |  |
| A66330 | Dodonaea viscosa | 2027-10-31 → 2027-09-05 (-56d) | 2027-11-15 → 2027-09-21 (-55d) |  | 1d → 48.3d |  |
| A66340 | Atriplex halimus | 2027-11-16 → 2027-09-21 (-56d) | 2027-12-01 → 2027-10-07 (-55d) |  | 1d → 48.3d |  |
| AR2 | **Arterial 2** | 2027-07-13 → 2027-05-16 (-58d) | 2027-08-05 → 2027-06-09 (-57d) |  |  |  |
| 2 | **Trees/ Palms** | 2027-07-13 → 2027-05-16 (-58d) | 2027-08-02 → 2027-06-06 (-57d) |  |  |  |
| A66510 | Roadside tree - Cordia sebestena | 2027-07-13 → 2027-05-16 (-58d) | 2027-07-15 → 2027-05-19 (-57d) |  | 102d → 151.3d |  |
| A66520 | Roadside tree - Parkinsonia aculeata | 2027-07-17 → 2027-05-19 (-59d) | 2027-07-19 → 2027-05-23 (-57d) |  | 102d → 151.3d |  |
| A66530 | Roadside tree - Dalbergia sissoo | 2027-07-20 → 2027-05-23 (-58d) | 2027-07-22 → 2027-05-26 (-57d) |  | 102d → 151.3d |  |
| A66540 | Roadside tree - Acacia stenophylla | 2027-07-24 → 2027-05-26 (-59d) | 2027-07-26 → 2027-05-30 (-57d) |  | 102d → 151.3d |  |
| A66550 | Roadside tree - Hibiscus tiliaceus | 2027-07-27 → 2027-05-30 (-58d) | 2027-07-29 → 2027-06-02 (-57d) |  | 102d → 151.3d |  |
| A66560 | Roadside tree - Azadirachla indica | 2027-07-31 → 2027-06-02 (-59d) | 2027-08-02 → 2027-06-06 (-57d) |  | 102d → 151.3d |  |
| 3 | **Miscellaneous Landscaping Items** | 2027-07-18 → 2027-05-20 (-59d) | 2027-08-02 → 2027-06-06 (-57d) |  |  |  |
| A66570 | Install Precast concrete block paving for sidewalk, mixed grey colour | 2027-07-18 → 2027-05-20 (-59d) | 2027-08-02 → 2027-06-06 (-57d) |  | 105d → 154.3d |  |
| A66580 | Install Precast concrete block paving for main intrsection, colour light grey | 2027-07-18 → 2027-05-20 (-59d) | 2027-08-02 → 2027-06-06 (-57d) |  | 105d → 154.3d |  |
| A66590 | install Precast concrete block paving for main intrsection, colour mid grey | 2027-07-18 → 2027-05-20 (-59d) | 2027-08-02 → 2027-06-06 (-57d) |  | 105d → 154.3d |  |
| A66600 | install Precast concrete block paving for main intrsection, colour dark grey | 2027-07-18 → 2027-05-20 (-59d) | 2027-08-02 → 2027-06-06 (-57d) |  | 105d → 154.3d |  |
| A66610 | Gravel, mixed dark beige + medium beige + light beige | 2027-07-18 → 2027-05-20 (-59d) | 2027-08-02 → 2027-06-06 (-57d) |  | 105d → 154.3d |  |
| A66620 | Concrete heel kerb | 2027-07-18 → 2027-05-20 (-59d) | 2027-08-02 → 2027-06-06 (-57d) |  | 105d → 154.3d |  |
| 1 | **Ground Cover And Shrubs** | 2027-08-03 → 2027-06-06 (-58d) | 2027-08-05 → 2027-06-09 (-57d) |  |  |  |
| A66470 | Lantana montevidensis | 2027-08-03 → 2027-06-06 (-58d) | 2027-08-05 → 2027-06-09 (-57d) |  | 102d → 151.3d |  |
| A66480 | Portulaca grandiflora | 2027-08-03 → 2027-06-06 (-58d) | 2027-08-05 → 2027-06-09 (-57d) |  | 102d → 151.3d |  |
| A66490 | Dodonaea viscosa | 2027-08-03 → 2027-06-06 (-58d) | 2027-08-05 → 2027-06-09 (-57d) |  | 102d → 151.3d |  |
| A66500 | Atriplex halimus | 2027-08-03 → 2027-06-06 (-58d) | 2027-08-05 → 2027-06-09 (-57d) |  | 102d → 151.3d |  |
| LBC | **LABOR CAMP** | 2027-02-02 → 2025-12-06 (-423d) | 2027-06-30 → 2027-09-06 (+68d) |  |  |  |
| RW | **ROAD WORKS** | 2027-02-02 → 2025-12-06 (-423d) | 2027-06-19 → 2027-08-25 (+67d) |  |  |  |
| DEM | **DEMOLITION** | 2027-02-02 → 2027-04-20 (+77d) | 2027-02-18 → 2027-05-13 (+84d) |  |  |  |
| A5450 | Demolition of existing Asphalt | 2027-02-02 → 2027-04-20 (+77d) | 2027-02-18 → 2027-05-08 (+79d) |  | 65d → 15.3d | A2620, A2740, A2720, A2710, A2700, A2690, A2680, A4825 → A2620, A2740, A2720, A2710, A2700, A2690, A2680, A59030 |
| A5460 | Demolition of existing Kerbs | 2027-02-02 → 2027-04-26 (+83d) | 2027-02-18 → 2027-05-13 (+84d) |  | 65d → 10.3d | A5450 SS → A64190 |
| ERT | **EARTHWORKS AND SITE GRADING** | 2027-02-20 → 2025-12-06 (-441d) | 2027-03-25 → 2027-06-01 (+68d) |  |  |  |
| A5470 | Earthworks - Cut Excavation | 2027-02-20 → 2025-12-06 A (-441d) | 2027-03-07 → 2026-01-29 A (-402d) | 0% → 100% | 65d → none |  |
| A5480 | Embankments to the site with common / suitable excavated material or suitable imported material | 2027-03-08 → 2027-05-13 (+66d) | 2027-03-20 → 2027-05-26 (+67d) |  | 65d → 10.3d |  |
| A5490 | Subgrade | 2027-03-21 → 2027-05-26 (+66d) | 2027-03-25 → 2027-06-01 (+68d) |  | 65d → 10.3d |  |
| AGG | **AGGREGATE BASE COURSE** | 2027-03-31 → 2027-06-06 (+67d) | 2027-04-14 → 2027-06-21 (+68d) |  |  |  |
| A5500 | Aggregate base course | 2027-03-31 → 2027-06-06 (+67d) | 2027-04-14 → 2027-06-21 (+68d) |  | 65d → 10.3d |  |
| BIT | **BITUMINOUS CONSTRUCTION** | 2027-04-15 → 2027-06-21 (+67d) | 2027-04-18 → 2027-06-24 (+67d) |  |  |  |
| A5510 | Bituminous base course (Grading I - Class A), after compaction , including Prime Coat (MC1) (if needed) | 2027-04-15 → 2027-06-21 (+67d) | 2027-04-18 → 2027-06-24 (+67d) |  | 65d → 10.3d |  |
| ASP | **ASPHALT WEARING COURSE** | 2027-04-19 → 2027-06-24 (+66d) | 2027-04-24 → 2027-06-30 (+67d) |  |  |  |
| A5520 | Bituminous concrete wearing course, after compaction (Grading I - Class A), including tack coat (RC2). | 2027-04-19 → 2027-06-24 (+66d) | 2027-04-24 → 2027-06-30 (+67d) |  | 65d → 10.3d |  |
| PRC | **PRECAST CONCRETE CURB** | 2027-04-25 → 2027-06-30 (+66d) | 2027-05-05 → 2027-07-12 (+68d) |  |  |  |
| A5530 | Concrete curb, Type (K1A) | 2027-04-25 → 2027-06-30 (+66d) | 2027-05-05 → 2027-07-12 (+68d) |  | 65d → 10.3d |  |
| A5540 | Concrete curb, Type (K1B) | 2027-04-25 → 2027-06-30 (+66d) | 2027-05-05 → 2027-07-12 (+68d) |  | 65d → 10.3d |  |
| PAM | **PAVEMENT MARKINGS** | 2027-05-06 → 2027-07-12 (+67d) | 2027-05-29 → 2027-08-04 (+67d) |  |  |  |
| A5550 | Retroreflective Thermoplastic White Traffic lines | 2027-05-06 → 2027-07-12 (+67d) | 2027-05-09 → 2027-07-15 (+67d) |  | 65d → 10.3d |  |
| A5560 | Retroreflective Thermoplastic Yellow Traffic lines | 2027-05-10 → 2027-07-15 (+66d) | 2027-05-12 → 2027-07-19 (+68d) |  | 65d → 10.3d |  |
| A5580 | Ceramic raised pavement markers | 2027-05-13 → 2027-07-19 (+67d) | 2027-05-17 → 2027-07-24 (+68d) |  | 65d → 10.3d |  |
| A5570 | Retroreflective raised pavement markers (Type A) | 2027-05-18 → 2027-07-24 (+67d) | 2027-05-23 → 2027-07-29 (+67d) |  | 65d → 10.3d |  |
| A5590 | Solar powered lighting cateyes pavement markers | 2027-05-24 → 2027-07-29 (+66d) | 2027-05-29 → 2027-08-04 (+67d) |  | 86d → 28.3d |  |
| TRS | **TRAFFIC SIGNAGE** | 2027-05-24 → 2027-07-29 (+66d) | 2027-06-19 → 2027-08-25 (+67d) |  |  |  |
| A5620 | Traffic signs, ground mounted, Sheet Alumenium, Double post | 2027-05-24 → 2027-07-29 (+66d) | 2027-05-27 → 2027-08-03 (+68d) |  | 65d → 10.3d |  |
| A5610 | Traffic signs, ground mounted, 1 Sheet Alumenium, Single post | 2027-05-29 → 2027-08-03 (+66d) | 2027-06-06 → 2027-08-12 (+67d) |  | 65d → 10.3d |  |
| A5600 | Traffic signs, ground mounted, 2 Sheet Alumenium, Single post | 2027-06-07 → 2027-08-12 (+66d) | 2027-06-19 → 2027-08-25 (+67d) |  | 65d → 10.3d |  |
| ELE | **Electrical Works "DRY"** | 2027-03-08 → 2027-05-13 (+66d) | 2027-06-14 → 2027-08-21 (+68d) |  |  |  |
| MVO | **MEDIUM VOLTAGE** | 2027-03-08 → 2027-05-13 (+66d) | 2027-05-19 → 2027-07-26 (+68d) |  |  |  |
| TRE | **MEDIUM VOLTAGE CABLE TRENCH** | 2027-03-08 → 2027-05-13 (+66d) | 2027-03-18 → 2027-05-25 (+68d) |  |  |  |
| A5630 | Excavation for Trench size 1.2m wide and 80cm deep | 2027-03-08 → 2027-05-13 (+66d) | 2027-03-18 → 2027-05-25 (+68d) |  | 72d → 14.3d |  |
| DBA | **MEDIUM VOLTAGE CABLES DUCT BANKS** | 2027-03-20 → 2027-05-25 (+66d) | 2027-03-24 → 2027-05-31 (+68d) |  |  |  |
| A5640 | 4-way Duct Bank (4x200mm duct) | 2027-03-20 → 2027-05-25 (+66d) | 2027-03-24 → 2027-05-31 (+68d) |  | 80d → 22.3d |  |
| CAB | **MEDIUM VOLTAGE CABLES** | 2027-03-25 → 2027-05-31 (+67d) | 2027-05-03 → 2027-07-10 (+68d) |  |  |  |
| A5650 | Cable: 33KV 3Cx400mm² AL/XLPE/LLDPE unarmored | 2027-03-25 → 2027-05-31 (+67d) | 2027-04-05 → 2027-06-12 (+68d) |  | 80d → 22.3d |  |
| A5660 | Single Core Cables, Copper, 33kV (3x1Cx70mm²,AL/XLPE/PVC). | 2027-04-06 → 2027-06-12 (+67d) | 2027-04-07 → 2027-06-14 (+68d) |  | 92d → 34.3d |  |
| A5670 | Straight joints cables for 36KV 3x400mm² AL/XLPE/LLDPE unarmored | 2027-04-06 → 2027-06-12 (+67d) | 2027-04-21 → 2027-06-28 (+68d) |  | 80d → 22.3d |  |
| A5680 | Cable Termination for 36KV 3Cx400mm² AL/XLPE/LLDPE | 2027-04-22 → 2027-06-28 (+67d) | 2027-05-03 → 2027-07-10 (+68d) |  | 80d → 22.3d |  |
| TRA | **Liquid-Filled Utility Transformers** | 2027-05-04 → 2027-07-10 (+67d) | 2027-05-19 → 2027-07-26 (+68d) |  |  |  |
| A5690 | 1000kVA, 33/0.4 KV unit substation | 2027-05-04 → 2027-07-10 (+67d) | 2027-05-19 → 2027-07-26 (+68d) |  | 80d → 22.3d |  |
| A5700 | 1500kVA, 33/0.4 KV unit substation | 2027-05-04 → 2027-07-10 (+67d) | 2027-05-09 → 2027-07-15 (+67d) |  | 103d → 45.3d |  |
| LVO | **LOW VOLTAGE "Road"** | 2027-03-20 → 2027-05-25 (+66d) | 2027-06-14 → 2027-08-21 (+68d) |  |  |  |
| CAB | **LOW VOLTAGE CABLES** | 2027-04-12 → 2027-06-17 (+66d) | 2027-06-05 → 2027-08-11 (+67d) |  |  |  |

| ID | Task | Start | Finish | Total float |
| --- | --- | --- | --- | --- |
| A5740 | Cables, Copper, (4Cx6mm²,Cu/XLPE/PVC + 1x6mm² PVC/ECC). | 2027-04-12 → 2027-06-17 (+66d) | 2027-04-29 → 2027-07-06 (+68d) | 72d → 14.3d |
| A5710 | Cables, Copper, (4Cx10mm²,Cu/XLPE/SWA/PVC +1x10mm² PVC/PVC) | 2027-05-20 → 2027-07-26 (+67d) | 2027-05-24 → 2027-07-31 (+68d) | 80d → 22.3d |
| A5730 | Cables, Aluminium, (4Cx70mm²,AL/XLPE/PVC). | 2027-05-25 → 2027-07-31 (+67d) | 2027-05-29 → 2027-08-04 (+67d) | 80d → 22.3d |
| A5720 | Cables, Aluminium, (4Cx300mm²,AL/XLPE/PVC). | 2027-05-30 → 2027-08-04 (+66d) | 2027-06-05 → 2027-08-11 (+67d) | 80d → 22.3d |
| CON | **CONDUITS** | 2027-03-20 → 2027-05-25 (+66d) | 2027-04-11 → 2027-06-17 (+67d) |  |
| A5750 | 50 mm diameter PVC Conduit | 2027-03-20 → 2027-05-25 (+66d) | 2027-04-11 → 2027-06-17 (+67d) | 72d → 14.3d |
| LIP | **LIGHTING POLES** | 2027-05-01 → 2027-07-06 (+66d) | 2027-05-11 → 2027-07-18 (+68d) |  |
| A5760 | Street Lighting Hot dip galvanized steel 8-meter, 1-meter single arm | 2027-05-01 → 2027-07-06 (+66d) | 2027-05-04 → 2027-07-11 (+68d) | 78d → 20.3d |
| A5770 | Street Lighting Hot dip galvanized steel 8-meter, double arm | 2027-05-01 → 2027-07-06 (+66d) | 2027-05-02 → 2027-07-08 (+67d) | 80d → 22.3d |
| A5780 | Street Lighting Hot dip galvanized steel 8-meter, 3-meter single arm | 2027-05-01 → 2027-07-06 (+66d) | 2027-05-11 → 2027-07-18 (+68d) | 72d → 14.3d |
| STL | **STREET LIGHTING LUMINAIRE** | 2027-05-12 → 2027-07-18 (+67d) | 2027-05-19 → 2027-07-26 (+68d) |  |
| A5790 | Street Lighting ( LED) Luminaire with 92 Watt, 13000 Lumen | 2027-05-12 → 2027-07-18 (+67d) | 2027-05-19 → 2027-07-26 (+68d) | 72d → 14.3d |
| ERT | **EARTHING SYSTEM** | 2027-05-20 → 2027-07-26 (+67d) | 2027-06-05 → 2027-08-11 (+67d) |  |
| A5800 | Earthing of lighting poles ,masts. feeder pillars , unit substations, RMU, L.V feeders and KWH meter | 2027-05-20 → 2027-07-26 (+67d) | 2027-06-05 → 2027-08-11 (+67d) | 72d → 14.3d |
| RCD | **ROAD CROSSING DUCTS** | 2027-03-27 → 2027-06-01 (+66d) | 2027-03-30 → 2027-06-06 (+68d) |  |
| A5810 | Road crossing ducts, 2 way (2 x 110mm PVC) | 2027-03-27 → 2027-06-01 (+66d) | 2027-03-30 → 2027-06-06 (+68d) | 65d → 10.3d |
| A5820 | Road crossing ducts, 3 way (3 x 110mm PVC) | 2027-03-27 → 2027-06-01 (+66d) | 2027-03-30 → 2027-06-06 (+68d) | 65d → 10.3d |
| A5830 | Road crossing ducts, 4 way (4 x 110mm PVC) | 2027-03-27 → 2027-06-01 (+66d) | 2027-03-28 → 2027-06-03 (+67d) | 67d → 12.3d |
| A5840 | Road crossing ducts,6 way (6 x 110mm PVC) | 2027-03-27 → 2027-06-01 (+66d) | 2027-03-29 → 2027-06-05 (+68d) | 66d → 11.3d |
| LPA | **LIGHTING PANELS** | 2027-06-06 → 2027-08-11 (+66d) | 2027-06-14 → 2027-08-21 (+68d) |  |
| A5850 | Street Lighting Feeder pillars | 2027-06-06 → 2027-08-11 (+66d) | 2027-06-08 → 2027-08-15 (+68d) | 72d → 14.3d |
| A5860 | installation of concrete wall | 2027-06-09 → 2027-08-15 (+67d) | 2027-06-14 → 2027-08-21 (+68d) | 72d → 14.3d |
| TEC | **TELECOMMUNICATIONS** | 2027-03-08 → 2027-05-13 (+66d) | 2027-04-01 → 2027-06-08 (+68d) |  |
| RCR | **ROAD CROSSING REINFORCED CONCRETE ENCASEMENT DUCTS** | 2027-03-08 → 2027-05-13 (+66d) | 2027-03-11 → 2027-05-18 (+68d) |  |
| A5870 | 6 way 50mm HDPE duct | 2027-03-08 → 2027-05-13 (+66d) | 2027-03-10 → 2027-05-17 (+68d) | 140d → 82.3d |
| A5880 | 6 way 50mm + 12 way 32mm HDPE duct | 2027-03-08 → 2027-05-13 (+66d) | 2027-03-09 → 2027-05-16 (+68d) | 141d → 83.3d |
| A5890 | 6 way 50mm + 8 way 32mm HDPE duct | 2027-03-08 → 2027-05-13 (+66d) | 2027-03-09 → 2027-05-16 (+68d) | 141d → 83.3d |
| A5900 | 6 way 50mm + 4 way 32mm HDPE duct | 2027-03-08 → 2027-05-13 (+66d) | 2027-03-09 → 2027-05-16 (+68d) | 141d → 83.3d |
| A5910 | 6 way 50mm + 2 way 32mm+1way 16mm HDPE duct | 2027-03-08 → 2027-05-13 (+66d) | 2027-03-09 → 2027-05-16 (+68d) | 141d → 83.3d |
| A5920 | 6 way 50mm + 2 way 32mm | 2027-03-08 → 2027-05-13 (+66d) | 2027-03-09 → 2027-05-16 (+68d) | 141d → 83.3d |
| A5930 | 12 way 50mm + 8 way 32mm HDPE duct | 2027-03-08 → 2027-05-13 (+66d) | 2027-03-10 → 2027-05-17 (+68d) | 140d → 82.3d |
| A5940 | 12 way 50mm + 2 way 32mm HDPE duct | 2027-03-08 → 2027-05-13 (+66d) | 2027-03-10 → 2027-05-17 (+68d) | 140d → 82.3d |
| A5950 | 8 way 32mm HDPE duct | 2027-03-08 → 2027-05-13 (+66d) | 2027-03-11 → 2027-05-18 (+68d) | 139d → 81.3d |
| A5960 | 4 way 32mm HDPE duct | 2027-03-08 → 2027-05-13 (+66d) | 2027-03-09 → 2027-05-16 (+68d) | 141d → 83.3d |
| UNR | **UNREINFORCED CONCRETE DUCTS** | 2027-03-08 → 2027-05-13 (+66d) | 2027-03-09 → 2027-05-16 (+68d) |  |
| A5970 | HDPE duct | 2027-03-08 → 2027-05-13 (+66d) | 2027-03-09 → 2027-05-16 (+68d) | 155d → 97.3d |
| DUC | **DUCTS** | 2027-03-08 → 2027-05-13 (+66d) | 2027-03-16 → 2027-05-23 (+68d) |  |
| A5980 | 2 x 32 mm diameter HDPE ducts | 2027-03-08 → 2027-05-13 (+66d) | 2027-03-11 → 2027-05-18 (+68d) | 139d → 81.3d |
| A5990 | 2 x 32 mm +1 x 16mm diameter HDPE ducts | 2027-03-08 → 2027-05-13 (+66d) | 2027-03-15 → 2027-05-22 (+68d) | 136d → 78.3d |
| A6000 | 8x 32mm diameter HDPE ducts | 2027-03-08 → 2027-05-13 (+66d) | 2027-03-09 → 2027-05-16 (+68d) | 141d → 83.3d |
| A6010 | 4x 32mm diameter HDPE ducts | 2027-03-08 → 2027-05-13 (+66d) | 2027-03-09 → 2027-05-16 (+68d) | 141d → 83.3d |
| A6020 | 6 x 50 mm diameter HDPE ducts | 2027-03-08 → 2027-05-13 (+66d) | 2027-03-16 → 2027-05-23 (+68d) | 135d → 77.3d |
| A6030 | 6 x 50 mm +2 x 32mm diameter HDPE ducts | 2027-03-08 → 2027-05-13 (+66d) | 2027-03-09 → 2027-05-16 (+68d) | 141d → 83.3d |
| A6040 | 6 x 50 mm +2 x 32mm+1 x 16mm diameter HDPE ducts | 2027-03-08 → 2027-05-13 (+66d) | 2027-03-11 → 2027-05-18 (+68d) | 139d → 81.3d |
| A6050 | 6 x 50 mm +8 x 32mm diameter HDPE ducts | 2027-03-08 → 2027-05-13 (+66d) | 2027-03-09 → 2027-05-16 (+68d) | 141d → 83.3d |
| A6060 | 6 x 50 mm +12 x 32mm diameter HDPE ducts | 2027-03-08 → 2027-05-13 (+66d) | 2027-03-09 → 2027-05-16 (+68d) | 141d → 83.3d |
| A6070 | 12 x 50 mm +8 x 32mm diameter HDPE ducts | 2027-03-08 → 2027-05-13 (+66d) | 2027-03-09 → 2027-05-16 (+68d) | 141d → 83.3d |
| A6080 | 12 x 50 mm +2x 32mm diameter HDPE ducts | 2027-03-08 → 2027-05-13 (+66d) | 2027-03-09 → 2027-05-16 (+68d) | 141d → 83.3d |
| A6090 | 1x 16 mm diameter HDPE ducts | 2027-03-08 → 2027-05-13 (+66d) | 2027-03-09 → 2027-05-16 (+68d) | 141d → 83.3d |
| MAH | **MANHOLES** | 2027-03-17 → 2027-05-23 (+67d) | 2027-04-01 → 2027-06-08 (+68d) |  |
| A6100 | Manhole 2000x1000 mm | 2027-03-17 → 2027-05-23 (+67d) | 2027-04-01 → 2027-06-08 (+68d) | 135d → 77.3d |
| HAH | **HANDHOLES** | 2027-03-17 → 2027-05-23 (+67d) | 2027-03-22 → 2027-05-29 (+68d) |  |
| A6110 | Handhole 600x600 mm | 2027-03-17 → 2027-05-23 (+67d) | 2027-03-22 → 2027-05-29 (+68d) | 144d → 86.3d |
| PWN | **POTABLE WATER NETWORK** | 2027-03-08 → 2027-05-13 (+66d) | 2027-04-29 → 2027-07-06 (+68d) |  |
| HDP | **HDPE PIPES 100 SDR 11 (PN 16 Bar)** | 2027-03-08 → 2027-05-13 (+66d) | 2027-03-23 → 2027-05-30 (+68d) |  |
| A6120 | 160mm Diameter | 2027-03-08 → 2027-05-13 (+66d) | 2027-03-23 → 2027-05-30 (+68d) | 111d → 53.3d |
| A6130 | 200mm Diameter | 2027-03-08 → 2027-05-13 (+66d) | 2027-03-11 → 2027-05-18 (+68d) | 153d → 95.3d |
| VAL | **VALVES** | 2027-03-24 → 2027-05-30 (+67d) | 2027-04-24 → 2027-06-30 (+67d) |  |
| A6150 | Wash-out Valves | 2027-03-24 → 2027-05-30 (+67d) | 2027-03-29 → 2027-06-05 (+68d) | 111d → 53.3d |
| A6160 | Air Valves | 2027-03-30 → 2027-06-05 (+67d) | 2027-04-04 → 2027-06-10 (+67d) | 111d → 53.3d |
| A6140 | Gate (Sluice) valves (Direct buried) | 2027-04-05 → 2027-06-10 (+66d) | 2027-04-18 → 2027-06-24 (+67d) | 111d → 53.3d |
| A6170 | Valve chambers | 2027-04-19 → 2027-06-24 (+66d) | 2027-04-24 → 2027-06-30 (+67d) | 111d → 53.3d |
| RCR | **ROAD CROSSING** | 2027-04-25 → 2027-06-30 (+66d) | 2027-04-29 → 2027-07-06 (+68d) |  |
| A6180 | HDPE road croosing with dia 160 mm | 2027-04-25 → 2027-06-30 (+66d) | 2027-04-29 → 2027-07-06 (+68d) | 111d → 53.3d |
| FIN | **FIRE NETWORK** | 2027-03-08 → 2027-05-13 (+66d) | 2027-05-03 → 2027-07-10 (+68d) |  |
| HDP | **HDPE PIPES 100 SDR 11 ( PN 16 Bar)** | 2027-03-08 → 2027-05-13 (+66d) | 2027-03-27 → 2027-06-02 (+67d) |  |
| A6190 | 160mm Diameter | 2027-03-08 → 2027-05-13 (+66d) | 2027-03-27 → 2027-06-02 (+67d) | 108d → 50.3d |
| A6200 | 200mm Diameter | 2027-03-08 → 2027-05-13 (+66d) | 2027-03-13 → 2027-05-19 (+67d) | 152d → 94.3d |
| VAL | **VALVES** | 2027-03-28 → 2027-06-02 (+66d) | 2027-04-17 → 2027-06-23 (+67d) |  |
| A6220 | Wash-out Valves | 2027-03-28 → 2027-06-02 (+66d) | 2027-03-31 → 2027-06-07 (+68d) | 108d → 50.3d |

| ID | Task | Start | Finish | Complete | Total float |
| --- | --- | --- | --- | --- | --- |
| A6230 | Air Valves | 2027-04-01 → 2027-06-07 (+67d) | 2027-04-05 → 2027-06-12 (+68d) |  | 108d → 50.3d |
| A6210 | Gate (Sluice) valves (Direct buried) | 2027-04-06 → 2027-06-12 (+67d) | 2027-04-11 → 2027-06-17 (+67d) |  | 108d → 50.3d |
| A6240 | Valve chambers | 2027-04-12 → 2027-06-17 (+66d) | 2027-04-17 → 2027-06-23 (+67d) |  | 108d → 50.3d |
| VAC | **VALVE CHAMBERS** | 2027-03-28 → 2027-06-02 (+66d) | 2027-04-07 → 2027-06-14 (+68d) |  |  |
| A6250 | Wash out chamber; on 160 mm dia pipeline | 2027-03-28 → 2027-06-02 (+66d) | 2027-04-01 → 2027-06-08 (+68d) |  | 116d → 58.3d |
| A6260 | Air valve chamber; on 160 mm dia pipeline | 2027-04-03 → 2027-06-08 (+66d) | 2027-04-07 → 2027-06-14 (+68d) |  | 116d → 58.3d |
| RCR | **Road Crossing** | 2027-04-18 → 2027-06-23 (+66d) | 2027-04-21 → 2027-06-28 (+68d) |  |  |
| A6730 | HDPE road croosing with dia 160 mm | 2027-04-18 → 2027-06-23 (+66d) | 2027-04-21 → 2027-06-28 (+68d) |  | 108d → 50.3d |
| FIH | **Fire Hydrant** | 2027-04-22 → 2027-06-28 (+67d) | 2027-05-03 → 2027-07-10 (+68d) |  |  |
| A6270 | 3-outlet fire hydrant | 2027-04-22 → 2027-06-28 (+67d) | 2027-05-03 → 2027-07-10 (+68d) |  | 108d → 50.3d |
| TSE | **TSE NETWORK** | 2027-03-08 → 2027-05-13 (+66d) | 2027-04-11 → 2027-06-17 (+67d) |  |  |
| HDP | **HDPE PIPES 100 SDR 11 ( PN 16 Bar)** | 2027-03-08 → 2027-05-13 (+66d) | 2027-03-18 → 2027-05-25 (+68d) |  |  |
| A6280 | 90mm Diameter | 2027-03-08 → 2027-05-13 (+66d) | 2027-03-14 → 2027-05-20 (+67d) |  | 110d → 52.3d |
| A6290 | 110mm Diameter | 2027-03-08 → 2027-05-13 (+66d) | 2027-03-18 → 2027-05-25 (+68d) |  | 127d → 69.3d |
| UPV | **UPVC PIPES IRRIGATION DUCTS** | 2027-03-08 → 2027-05-13 (+66d) | 2027-03-11 → 2027-05-18 (+68d) |  |  |
| A6300 | Pipe with diameter 200 mm. | 2027-03-08 → 2027-05-13 (+66d) | 2027-03-11 → 2027-05-18 (+68d) |  | 153d → 95.3d |
| VAL | **VALVES** | 2027-03-20 → 2027-05-25 (+66d) | 2027-03-31 → 2027-06-07 (+68d) |  |  |
| A6320 | Wash-out Valves | 2027-03-20 → 2027-05-25 (+66d) | 2027-03-22 → 2027-05-29 (+68d) |  | 127d → 69.3d |
| A6330 | Air Valves | 2027-03-23 → 2027-05-29 (+67d) | 2027-03-25 → 2027-06-01 (+68d) |  | 127d → 69.3d |
| A6310 | Gate (Sluice) valves (Direct buried) | 2027-03-27 → 2027-06-01 (+66d) | 2027-03-31 → 2027-06-07 (+68d) |  | 127d → 69.3d |
| VAC | **VALVE CHAMBERS** | 2027-04-01 → 2027-06-07 (+67d) | 2027-04-10 → 2027-06-16 (+67d) |  |  |
| A6340 | Wash out chambers | 2027-04-01 → 2027-06-07 (+67d) | 2027-04-05 → 2027-06-12 (+68d) |  | 128d → 70.3d |
| A6350 | Air Valve chambers | 2027-04-06 → 2027-06-12 (+67d) | 2027-04-10 → 2027-06-16 (+67d) |  | 128d → 70.3d |
| RCR | **ROAD CROSSING** | 2027-04-01 → 2027-06-07 (+67d) | 2027-04-04 → 2027-06-10 (+67d) |  |  |
| A6360 | HDPE road croosing with dia 110 mm | 2027-04-01 → 2027-06-07 (+67d) | 2027-04-04 → 2027-06-10 (+67d) |  | 127d → 69.3d |
| IRC | **IRRIGATION CABLES** | 2027-04-05 → 2027-06-10 (+66d) | 2027-04-11 → 2027-06-17 (+67d) |  |  |
| A6370 | Decoder cables 12 AWG between valves and controllers | 2027-04-05 → 2027-06-10 (+66d) | 2027-04-11 → 2027-06-17 (+67d) |  | 127d → 69.3d |
| SWN | **SEWERAGE NETWORK** | 2027-03-08 → 2026-08-11 (-209d) | 2027-04-11 → 2027-06-15 (+65d) |  |  |
| GRP | **GRP PIPES** | 2027-03-08 → 2026-08-11 (-209d) | 2027-04-06 → 2027-06-06 (+61d) |  |  |
| A6380 | 150mm Diameter | 2027-03-08 → 2026-08-11 A (-209d) | 2027-03-14 → 2027-05-18 (+65d) | 0% → 20% | 127d → 70.7d |
| A6390 | 200mm Diameter | 2027-03-27 → 2026-08-11 A (-228d) | 2027-04-06 → 2027-06-06 (+61d) | 0% → 20% | 131d → 78.5d |
| A6400 | 250mm Diameter | 2027-03-15 → 2026-08-11 A (-216d) | 2027-03-25 → 2027-05-27 (+63d) | 0% → 20% | 131d → 78.5d |
| A6410 | 300mm Diameter | 2027-03-08 → 2026-08-11 A (-209d) | 2027-03-13 → 2027-05-18 (+66d) | 0% → 20% | 128d → 71.5d |
| MAH | **MANHOLES** | 2027-03-15 → 2026-08-11 (-216d) | 2027-04-11 → 2027-06-15 (+65d) |  |  |
| PCH | **PRECAST MANHOLE** | 2027-03-15 → 2026-08-11 (-216d) | 2027-03-18 → 2027-05-23 (+66d) |  |  |
| A6420 | Precast Manhole ring 1200 mm internal dia. | 2027-03-15 → 2026-08-11 A (-216d) | 2027-03-18 → 2027-05-23 (+66d) | 0% → 5% | 127d → 70.7d |
| ISH | **INSPECTION MANHOLES** | 2027-03-20 → 2027-05-23 (+64d) | 2027-04-11 → 2027-06-15 (+65d) |  |  |
| A6430 | Manholes with internal dimensions of 60 cm x 60 cm Phase 1 | 2027-03-20 → 2027-05-23 (+64d) | 2027-04-11 → 2027-06-15 (+65d) |  | 127d → 70.7d |
| A6740 | Manholes with internal dimensions of 60 cm x 60 cm Phase 2 | 2027-03-20 → 2027-05-23 (+64d) | 2027-04-11 → 2027-06-15 (+65d) |  | 127d → 70.7d |
| STW | **STORM WATER DRAINAGE NETWORK** | 2027-03-08 → 2027-05-13 (+66d) | 2027-05-16 → 2027-07-22 (+67d) |  |  |
| GRP | **GRP PIPES** | 2027-03-08 → 2027-05-13 (+66d) | 2027-03-30 → 2027-06-06 (+68d) |  |  |
| A6440 | 400mm Diameter | 2027-03-08 → 2027-05-13 (+66d) | 2027-03-21 → 2027-05-27 (+67d) |  | 105d → 47.3d |
| A6450 | 500mm Diameter | 2027-03-08 → 2027-05-13 (+66d) | 2027-03-18 → 2027-05-25 (+68d) |  | 107d → 49.3d |
| A6460 | 600mm Diameter | 2027-03-08 → 2027-05-13 (+66d) | 2027-03-30 → 2027-06-06 (+68d) |  | 97d → 39.3d |
| A6470 | 700mm Diameter | 2027-03-08 → 2027-05-13 (+66d) | 2027-03-30 → 2027-06-06 (+68d) |  | 97d → 39.3d |
| A6480 | 800mm Diameter | 2027-03-08 → 2027-05-13 (+66d) | 2027-03-14 → 2027-05-20 (+67d) |  | 111d → 53.3d |
| A6490 | 900mm Diameter | 2027-03-08 → 2027-05-13 (+66d) | 2027-03-14 → 2027-05-20 (+67d) |  | 111d → 53.3d |
| A6500 | 1000mm Diameter | 2027-03-08 → 2027-05-13 (+66d) | 2027-03-13 → 2027-05-19 (+67d) |  | 112d → 54.3d |
| UPV | **UPVC PIPES** | 2027-03-08 → 2027-05-13 (+66d) | 2027-03-23 → 2027-05-30 (+68d) |  |  |
| A6510 | 300mm Diameter | 2027-03-08 → 2027-05-13 (+66d) | 2027-03-23 → 2027-05-30 (+68d) |  | 143d → 85.3d |
| A6520 | 400mm Diameter | 2027-03-08 → 2027-05-13 (+66d) | 2027-03-11 → 2027-05-18 (+68d) |  | 113d → 55.3d |
| MAH | **MANHOLES** | 2027-03-22 → 2027-05-27 (+66d) | 2027-05-16 → 2027-07-22 (+67d) |  |  |
| 2 | **Precast Manhole 1200** | 2027-03-31 → 2027-06-06 (+67d) | 2027-04-22 → 2027-06-29 (+68d) |  |  |
| A6530 | Precast Manhole ring 1200 mm internal dia. | 2027-03-31 → 2027-06-06 (+67d) | 2027-04-22 → 2027-06-29 (+68d) |  | 97d → 39.3d |
| 1 | **Precast Manhole 1500** | 2027-03-22 → 2027-05-27 (+66d) | 2027-04-10 → 2027-06-16 (+67d) |  |  |
| A6540 | Precast Manhole ring 1500 mm internal dia Phase 1 | 2027-03-22 → 2027-05-27 (+66d) | 2027-04-08 → 2027-06-15 (+68d) |  | 128d → 70.3d |
| A6750 | Precast Manhole ring 1500 mm internal dia Phase 2 | 2027-03-22 → 2027-05-27 (+66d) | 2027-04-10 → 2027-06-16 (+67d) |  | 128d → 70.3d |
| 3 | **Precast Manhole 2000** | 2027-03-22 → 2027-05-27 (+66d) | 2027-04-08 → 2027-06-15 (+68d) |  |  |
| A6550 | Precast Manhole ring 2000 mm internal dia Phase 1 | 2027-03-22 → 2027-05-27 (+66d) | 2027-04-08 → 2027-06-15 (+68d) |  | 129d → 71.3d |
| A6760 | Precast Manhole ring 2000 mm internal dia Phase 2 | 2027-03-22 → 2027-05-27 (+66d) | 2027-04-07 → 2027-06-14 (+68d) |  | 129d → 71.3d |
| 4 | **Concrete Catch Basin** | 2027-04-24 → 2027-06-29 (+66d) | 2027-05-16 → 2027-07-22 (+67d) |  |  |
| A6560 | Single Catch basin | 2027-04-24 → 2027-06-29 (+66d) | 2027-05-16 → 2027-07-22 (+67d) |  | 97d → 39.3d |
| A6570 | Double Catch basin | 2027-04-24 → 2027-06-29 (+66d) | 2027-04-27 → 2027-07-04 (+68d) |  | 97d → 39.3d |
| 1 | **LANDSCAPE** | 2027-03-08 → 2027-05-13 (+66d) | 2027-06-30 → 2027-09-06 (+68d) |  |  |
| GCS | **GROUND COVER AND SHRUBS** | 2027-04-25 → 2027-06-30 (+66d) | 2027-05-05 → 2027-07-12 (+68d) |  |  |
| A6580 | GROUND COVER AND SHRUBS | 2027-04-25 → 2027-06-30 (+66d) | 2027-05-05 → 2027-07-12 (+68d) |  | 106d → 48.3d |
| TRP | **TREES &PALMS** | 2027-06-15 → 2027-08-21 (+67d) | 2027-06-30 → 2027-09-06 (+68d) |  |  |
| A6590 | Trees/ Palms Package 1 | 2027-06-15 → 2027-08-21 (+67d) | 2027-06-26 → 2027-09-01 (+67d) |  | 72d → 14.3d |
| A6770 | Trees/ Palms Package 2 | 2027-06-15 → 2027-08-21 (+67d) | 2027-06-26 → 2027-09-01 (+67d) |  | 72d → 14.3d |
| A6780 | Trees/ Palms Package 3 | 2027-06-15 → 2027-08-21 (+67d) | 2027-06-26 → 2027-09-01 (+67d) |  | 72d → 14.3d |

| ID | Task | Start | Finish | Complete | Total float | Predecessors |
| --- | --- | --- | --- | --- | --- | --- |
| A6790 | Trees/ Palms Package 4 | 2027-06-20 → 2027-08-25 (+66d) | 2027-06-30 → 2027-09-06 (+68d) |  | 68d → 10.3d |  |
| MIS | **MISCELLANEOUS** | 2027-05-06 → 2027-07-12 (+67d) | 2027-05-22 → 2027-07-28 (+67d) |  |  |  |
| A6600 | Precast concrete block paving for sidewalk | 2027-05-06 → 2027-07-12 (+67d) | 2027-05-10 → 2027-07-17 (+68d) |  | 82d → 24.3d |  |
| A6610 | Precast concrete block paving for main intrsection | 2027-05-06 → 2027-07-12 (+67d) | 2027-05-10 → 2027-07-17 (+68d) |  | 82d → 24.3d |  |
| A6620 | Gravel, mixed | 2027-05-11 → 2027-07-17 (+67d) | 2027-05-13 → 2027-07-20 (+68d) |  | 82d → 24.3d |  |
| A6640 | Supply and install Compacted sand | 2027-05-15 → 2027-07-20 (+66d) | 2027-05-17 → 2027-07-24 (+68d) |  | 82d → 24.3d |  |
| A6630 | concrete heel kerb | 2027-05-18 → 2027-07-24 (+67d) | 2027-05-22 → 2027-07-28 (+67d) |  | 82d → 24.3d |  |
| FEG | **FENCES & GATES** | 2027-03-08 → 2027-05-13 (+66d) | 2027-06-02 → 2027-08-09 (+68d) |  |  |  |
| A6650 | Fences and Gates Phase 1 | 2027-03-08 → 2027-05-13 (+66d) | 2027-03-18 → 2027-05-25 (+68d) |  | 117d → 59.3d |  |
| A7030 | Fences and Gates Phase 2 | 2027-03-08 → 2027-05-13 (+66d) | 2027-03-18 → 2027-05-25 (+68d) |  | 117d → 59.3d |  |
| A7040 | Fences and Gates Phase 3 | 2027-03-08 → 2027-05-13 (+66d) | 2027-03-18 → 2027-05-25 (+68d) |  | 117d → 59.3d |  |
| A7050 | Fences and Gates Phase 4 | 2027-03-08 → 2027-05-13 (+66d) | 2027-03-18 → 2027-05-25 (+68d) |  | 117d → 59.3d |  |
| A7060 | Fences and Gates Phase 5 | 2027-03-08 → 2027-05-13 (+66d) | 2027-03-18 → 2027-05-25 (+68d) |  | 117d → 59.3d |  |
| A7070 | Fences and Gates Phase 6 | 2027-03-20 → 2027-05-25 (+66d) | 2027-03-30 → 2027-06-06 (+68d) |  | 117d → 59.3d |  |
| A7080 | Fences and Gates Phase 7 | 2027-03-20 → 2027-05-25 (+66d) | 2027-03-30 → 2027-06-06 (+68d) |  | 117d → 59.3d |  |
| A7090 | Fences and Gates Phase 8 | 2027-03-20 → 2027-05-25 (+66d) | 2027-03-30 → 2027-06-06 (+68d) |  | 117d → 59.3d |  |
| A7100 | Fences and Gates Phase 9 | 2027-03-20 → 2027-05-25 (+66d) | 2027-03-30 → 2027-06-06 (+68d) |  | 117d → 59.3d |  |
| A7110 | Fences and Gates Phase 10 | 2027-03-20 → 2027-05-25 (+66d) | 2027-03-30 → 2027-06-06 (+68d) |  | 117d → 59.3d |  |
| A7120 | Fences and Gates Phase 11 | 2027-03-31 → 2027-06-06 (+67d) | 2027-04-11 → 2027-06-17 (+67d) |  | 117d → 59.3d |  |
| A7130 | Fences and Gates Phase 12 | 2027-03-31 → 2027-06-06 (+67d) | 2027-04-11 → 2027-06-17 (+67d) |  | 117d → 59.3d |  |
| A7140 | Fences and Gates Phase 13 | 2027-03-31 → 2027-06-06 (+67d) | 2027-04-11 → 2027-06-17 (+67d) |  | 117d → 59.3d |  |
| A7150 | Fences and Gates Phase 14 | 2027-03-31 → 2027-06-06 (+67d) | 2027-04-11 → 2027-06-17 (+67d) |  | 117d → 59.3d |  |
| A7160 | Fences and Gates Phase 15 | 2027-03-31 → 2027-06-06 (+67d) | 2027-04-11 → 2027-06-17 (+67d) |  | 117d → 59.3d |  |
| A7170 | Fences and Gates Phase 16 | 2027-04-12 → 2027-06-17 (+66d) | 2027-04-22 → 2027-06-29 (+68d) |  | 117d → 59.3d |  |
| A7180 | Fences and Gates Phase 17 | 2027-04-12 → 2027-06-17 (+66d) | 2027-04-22 → 2027-06-29 (+68d) |  | 117d → 59.3d |  |
| A7190 | Fences and Gates Phase 18 | 2027-04-12 → 2027-06-17 (+66d) | 2027-04-22 → 2027-06-29 (+68d) |  | 117d → 59.3d |  |
| A7200 | Fences and Gates Phase 19 | 2027-04-12 → 2027-06-17 (+66d) | 2027-04-22 → 2027-06-29 (+68d) |  | 117d → 59.3d |  |
| A7210 | Fences and Gates Phase 20 | 2027-05-23 → 2027-07-28 (+66d) | 2027-06-02 → 2027-08-09 (+68d) |  | 82d → 24.3d |  |
| FUR | **SITE FURNISHINGS** | 2027-05-06 → 2027-07-12 (+67d) | 2027-05-30 → 2027-08-05 (+67d) |  |  |  |
| A7000 | Site Furnishings Phase 3 | 2027-05-06 → 2027-07-12 (+67d) | 2027-05-13 → 2027-07-20 (+68d) |  | 85d → 27.3d |  |
| A6990 | Site Furnishings Phase 2 | 2027-05-15 → 2027-07-20 (+66d) | 2027-05-22 → 2027-07-28 (+67d) |  | 85d → 27.3d |  |
| A6660 | Site Furnishings Phase 1 | 2027-05-23 → 2027-07-28 (+66d) | 2027-05-30 → 2027-08-05 (+67d) |  | 85d → 27.3d |  |
| SIR | **SECONDARY IRRIGATION** | 2027-03-15 → 2027-05-20 (+66d) | 2027-04-22 → 2027-06-29 (+68d) |  |  |  |
| HDP | **HDPE PIPES** | 2027-03-15 → 2027-05-20 (+66d) | 2027-03-30 → 2027-06-06 (+68d) |  |  |  |
| A6670 | 90 mm PN 10, | 2027-03-15 → 2027-05-20 (+66d) | 2027-03-18 → 2027-05-25 (+68d) |  | 120d → 62.3d |  |
| A6680 | 75 mm PN 10, | 2027-03-15 → 2027-05-20 (+66d) | 2027-03-17 → 2027-05-24 (+68d) |  | 121d → 63.3d |  |
| A6690 | 63 mm PN 10, | 2027-03-15 → 2027-05-20 (+66d) | 2027-03-18 → 2027-05-25 (+68d) |  | 120d → 62.3d |  |
| A6700 | 50 mm PN 10, | 2027-03-15 → 2027-05-20 (+66d) | 2027-03-20 → 2027-05-26 (+67d) |  | 119d → 61.3d |  |
| A6710 | 32 mm PN 10, | 2027-03-15 → 2027-05-20 (+66d) | 2027-03-30 → 2027-06-06 (+68d) |  | 110d → 52.3d |  |
| 1 | **VALVES & FITTINGS** | 2027-03-31 → 2027-06-06 (+67d) | 2027-04-22 → 2027-06-29 (+68d) |  |  |  |
| A6720 | Valves and Fittings Phase 1 | 2027-03-31 → 2027-06-06 (+67d) | 2027-04-22 → 2027-06-29 (+68d) |  | 110d → 52.3d |  |
| A7010 | Valves and Fittings Phase 1 | 2027-03-31 → 2027-06-06 (+67d) | 2027-04-22 → 2027-06-29 (+68d) |  | 110d → 52.3d |  |
| A7020 | Valves and Fittings Phase 1 | 2027-03-31 → 2027-06-06 (+67d) | 2027-04-22 → 2027-06-29 (+68d) |  | 110d → 52.3d |  |
| MOS | **MOSQUE** | 2027-02-02 → 2026-08-15 (-171d) |  |  |  |  |
| 1 | **Mosque – Foundations** | 2027-02-02 → 2026-08-15 (-171d) | 2027-03-06 → 2027-04-15 (+40d) |  |  |  |
| A55800 | Excavation for Mosque Footings | 2027-02-02 → 2026-08-15 A (-171d) | 2027-02-09 → 2026-09-20 A (-142d) | 0% → 100% | 0d → none | A10620, A10670, A11190, A11200, A93190, A11150 → A10330, A10340, A10350, A10360, A10370, A10380, A10390, A10400, A10410, A10420, A10430, A10440, A10450, A10460, A10470, A10480, A10490, A10500, A10510, A10520, A10530, A10540, A10550, A10560, A10570, A10580, A10590, A10600, A10610, A10620, A10630, A10640, A10650, A10660, A10670, A10680, A11190, A11200, A11210, A11220, A10970, A10980, A93190 |
| A55810 | RC Footings Reinforcement for Mosque | 2027-02-10 → 2026-08-15 A (-179d) | 2027-02-23 → 2026-09-20 A (-156d) | 0% → 100% | 0d → none | A55800, A10600, A10610, A10590 → A55800 |
| A55820 | RC Footings Concreting for Mosque | 2027-02-24 → 2026-08-21 A (-187d) | 2027-03-01 → 2027-04-12 (+42d) | 0% → 30% |  |  |
| A55830 | Backfilling & Compaction for Mosque | 2027-03-02 → 2026-08-21 A (-193d) | 2027-03-06 → 2027-04-15 (+40d) | 0% → 30% | 2d → 0d | A55820, A10500 SS+15d, A10500 FF+15d → A55820 |
| 4 | **Mosque – Superstructure** | 2027-03-07 → 2026-08-21 (-198d) | 2027-04-24 → 2027-05-24 (+30d) |  |  |  |
| A55840 | Columns Reinforcement & Shuttering for Mosque | 2027-03-07 → 2026-08-21 A (-198d) | 2027-03-20 → 2027-04-26 (+37d) | 0% → 20% | 50d → 31.8d |  |
| A55850 | Columns Concreting for Mosque | 2027-03-21 → 2026-08-21 A (-212d) | 2027-03-24 → 2027-05-01 (+38d) | 0% → 20% | 50d → 31.8d | A55840, A10570 → A55840 |
| A55860 | Slab / beams Formwork & Reinforcement for Mosque | 2027-03-25 → 2026-08-21 A (-216d) | 2027-04-07 → 2027-05-11 (+34d) | 0% → 20% | 50d → 31.8d |  |
| A55870 | Slab / beams Concreting for Mosque | 2027-04-08 → 2026-08-21 A (-230d) | 2027-04-12 → 2027-05-15 (+33d) | 0% → 20% | 50d → 31.8d |  |
| A55990 | Slab on grade for Mosque | 2027-04-13 → 2026-08-21 A (-235d) | 2027-04-24 → 2027-05-24 (+30d) | 0% → 20% | 50d → 31.8d |  |
| 6 | **Mosque – Masonry & Roofing** | 2027-05-05 → 2026-08-21 (-257d) | 2027-05-13 → 2027-05-31 (+18d) |  |  |  |
| A55880 | External Blockwork walls for Mosque | 2027-05-05 → 2026-08-21 A (-257d) | 2027-05-13 → 2027-05-31 (+18d) | 0% → 30% | 41d → 31.8d | A55990, A10340 → A55990 |
| A55950 | Internal Blockwork walls for Mosque | 2027-05-05 → 2026-08-21 A (-257d) | 2027-05-13 → 2027-05-31 (+18d) | 0% → 30% | 41d → 31.8d | A55990, A10340 → A55990 |
| 5 | **Mosque – Finishes** | 2027-06-30 → 2026-08-21 (-313d) | 2027-09-12 → 2027-08-05 (-38d) |  |  |  |
| A55930 | MEP First Fix for Mosque | 2027-06-30 → 2026-08-21 A (-313d) | 2027-07-11 → 2027-06-08 (-33d) | 0% → 30% | 1d → 31.8d | A55950, A55880, A10820, A10880, A10780, A10370 → A55950, A55880 |
| A55890 | Internal Plastering for Mosque | 2027-07-07 → 2027-05-31 (-37d) | 2027-07-24 → 2027-06-17 (-37d) |  | 1d → 31.8d | A55930 SS+6d, A55930 FF+6d, A10390, A10400, A10480, A10630, A11140 → A55930 SS+6d, A55930 FF+6d |
| A55900 | Floor Finishes for Mosque | 2027-07-14 → 2027-06-07 (-37d) | 2027-07-31 → 2027-06-24 (-37d) |  | 3d → 33.8d | A55890 SS+6d, A10640, A10440, A10450 → A55890 SS+6d |
| A55910 | Ceiling Works for Mosque | 2027-07-14 → 2027-06-07 (-37d) | 2027-07-29 → 2027-06-23 (-36d) |  | 4d → 34.8d | A55890 SS+6d, A10650, A10460 → A55890 SS+6d |
| A55970 | Install Doors & Windows | 2027-07-25 → 2027-06-17 (-38d) | 2027-08-04 → 2027-06-29 (-36d) |  | 1d → 31.8d | A55890, A10410, A10420 → A55890 |
| A55920 | painting and cladding works for Mosque | 2027-08-01 → 2027-06-24 (-38d) | 2027-08-14 → 2027-07-08 (-37d) |  | 3d → 33.8d | A55900, A55910, A10550, A10560, A10430 → A55900, A55910 |
| A55960 | Install handrails / Ladders / GRC works | 2027-08-05 → 2027-06-29 (-37d) | 2027-08-16 → 2027-07-11 (-36d) |  | 1d → 31.8d | A55970, A10360 → A55970 |
| A55940 | MEP Second Fix for Mosque | 2027-08-18 → 2027-07-11 (-38d) | 2027-08-26 → 2027-07-20 (-37d) |  | 0d → 31.8d | A55920, A55960, A10470, A10900, A10910, A10700, A10830, A10840, A10850, A10860, A10920, A10790, A11220, A10980, A11210 → A55920, A55960 |
| A55980 | Required finished works includes Quran shelf / shoe rack and other requirments | 2027-08-28 → 2027-07-20 (-39d) | 2027-09-12 → 2027-08-05 (-38d) |  | 0d → 31.8d | A55920, A55940, A10660 → A55920, A55940 |
| 2 | **MINARET** | 2027-03-07 → 2026-08-15 (-204d) | 2027-09-09 → 2027-05-20 (-112d) |  |  |  |
| 1 | **Minaret – Foundations** | 2027-03-07 → 2026-08-15 (-204d) | 2027-04-07 → 2026-09-20 (-199d) |  |  |  |

| ID | Task | Start | Finish | Complete | Total float | Predecessors |
| --- | --- | --- | --- | --- | --- | --- |
| A56000 | Excavation for Mosque Footings | 2027-03-07 → 2026-08-15 A (-204d) | 2027-03-14 → 2026-09-20 A (-175d) | 0% → 100% | 2d → none |  |
| A56010 | RC Footings Reinforcement for minaret | 2027-03-15 → 2026-08-15 A (-212d) | 2027-03-28 → 2026-09-20 A (-189d) | 0% → 100% | 2d → none | A56000, A10380, A10590 → A56000 |
| A56020 | RC Footings Concreting for minaret | 2027-03-29 → 2026-08-15 A (-226d) | 2027-04-03 → 2026-09-20 A (-195d) | 0% → 100% | 2d → none |  |
| A56030 | Backfilling & Compaction for minaret | 2027-04-04 → 2026-08-15 A (-232d) | 2027-04-07 → 2026-09-20 A (-199d) | 0% → 100% | 2d → none |  |
| 2 | **Minaret – RC Structure** | 2027-06-19 → 2026-08-15 (-308d) | 2027-08-17 → 2027-04-27 (-112d) |  |  |  |
| A56040 | Columns Reinforcement & Shuttering for minaret | 2027-06-19 → 2026-08-15 A (-308d) | 2027-07-08 → 2026-09-20 A (-291d) | 0% → 100% | 2d → none | A56030, A10350 → A56030 |
| A56050 | Columns Concreting for minaret | 2027-06-28 → 2026-08-15 A (-317d) | 2027-07-18 → 2026-09-20 A (-301d) | 0% → 100% | 2d → none |  |
| A56060 | Slab / beams Formwork & Reinforcement for minaret | 2027-07-19 → 2026-08-15 A (-338d) | 2027-08-01 → 2026-09-20 A (-315d) | 0% → 100% | 2d → none |  |
| A56070 | Slab / beams Concreting for minaret | 2027-08-02 → 2026-08-15 A (-352d) | 2027-08-05 → 2026-09-20 A (-319d) | 0% → 100% | 2d → none |  |
| A56080 | Slab on grade for minaret | 2027-08-07 → 2027-04-15 (-114d) | 2027-08-17 → 2027-04-27 (-112d) |  | 2d → 98d |  |
| 3 | **Minaret – Finishes** | 2027-08-18 → 2027-04-27 (-113d) | 2027-09-09 → 2027-05-20 (-112d) |  |  |  |
| A56090 | Block works | 2027-08-18 → 2027-04-27 (-113d) | 2027-08-26 → 2027-05-06 (-112d) |  | 2d → 98d | A56080, A10520, A10530 → A56080 |
| A56100 | Finishes & GRC | 2027-08-28 → 2027-05-06 (-114d) | 2027-09-09 → 2027-05-20 (-112d) |  | 2d → 98d | A56090, A10510, A10490, A10330 SS, A10580, A10330 FF → A56090 |
| 3 | **TOILET & WASH AREA** | 2027-04-08 → 2027-04-15 (+7d) |  |  |  |  |
| 1 | **Toilet – Foundations** | 2027-04-08 → 2027-04-15 (+7d) | 2027-05-10 → 2027-05-18 (+8d) |  |  |  |
| A56110 | Excavation for toilet & wash area | 2027-04-08 → 2027-04-15 (+7d) | 2027-04-15 → 2027-04-24 (+9d) |  | 2d → 0d |  |
| A56120 | RC Footings Reinforcement for toilet & wash area | 2027-04-17 → 2027-04-24 (+7d) | 2027-04-29 → 2027-05-08 (+9d) |  | 2d → 0d |  |
| A56130 | RC Footings Concreting for toilet & wash area | 2027-05-01 → 2027-05-08 (+7d) | 2027-05-05 → 2027-05-13 (+8d) |  | 2d → 0d |  |
| A56140 | Backfilling & Compaction for toilet & wash area | 2027-05-06 → 2027-05-13 (+7d) | 2027-05-10 → 2027-05-18 (+8d) |  | 2d → 0d |  |
| 2 | **Toilet – Superstructure** | 2027-05-11 → 2027-05-18 (+7d) | 2027-07-10 → 2027-07-13 (+3d) |  |  |  |
| A56150 | Columns Reinforcement & Shuttering for toilet & wash area | 2027-05-11 → 2027-05-18 (+7d) | 2027-05-31 → 2027-06-08 (+8d) |  | 2d → 0d |  |
| A56160 | Columns Concreting for toilet & wash area | 2027-05-20 → 2027-05-23 (+3d) | 2027-06-09 → 2027-06-13 (+4d) |  | 2d → 0d | A56150 SS+8d, A56150 FF+8d → A56150 SS+4d, A56150 FF+4d |
| A56170 | Slab / beams Formwork & Reinforcement for toilet & wash area | 2027-06-10 → 2027-06-13 (+3d) | 2027-06-23 → 2027-06-27 (+4d) |  | 2d → 0d |  |
| A56180 | Slab / beams Concreting for toilet & wash area | 2027-06-24 → 2027-06-27 (+3d) | 2027-06-28 → 2027-07-01 (+3d) |  | 2d → 0d |  |
| A56190 | Slab on grade for toilet & wash area | 2027-06-29 → 2027-07-01 (+2d) | 2027-07-10 → 2027-07-13 (+3d) |  | 2d → 0d |  |
| 3 | **Toilet – MEP Works** | 2027-07-11 → 2027-07-13 (+2d) | 2027-07-19 → 2027-07-22 (+3d) |  |  |  |
| A56200 | External Blockwork walls for toilet & wash area | 2027-07-11 → 2027-07-13 (+2d) | 2027-07-19 → 2027-07-22 (+3d) |  | 2d → 0d |  |
| A56210 | Internal walls for toilet & wash area | 2027-07-11 → 2027-07-13 (+2d) | 2027-07-19 → 2027-07-22 (+3d) |  | 2d → 0d |  |
| 4 | **Toilet – Finishes** | 2027-07-20 → 2027-07-22 (+2d) |  |  |  |  |
| A56260 | MEP First Fix for toilet & wash area | 2027-07-20 → 2027-07-22 (+2d) | 2027-07-28 → 2027-08-01 (+4d) |  | 2d → 0d |  |
| A56220 | Internal Plastering for toilet & wash area | 2027-07-27 → 2027-07-28 (+1d) | 2027-08-09 → 2027-08-11 (+2d) |  | 2d → 0d | A56260 SS+6d, A56260 FF+6d → A56260 SS+5d, A56260 FF+5d |
| A56230 | Floor Finishes for toilet & wash area | 2027-08-03 → 2027-08-04 (+1d) | 2027-08-17 → 2027-08-19 (+2d) |  | 2d → 0d |  |
| A56240 | Ceiling Works for toilet & wash area | 2027-08-03 → 2027-08-04 (+1d) | 2027-08-16 → 2027-08-18 (+2d) |  | 3d → 1d |  |
| A56290 | Install Doors & Windows for toilet & wash area | 2027-08-10 → 2027-08-11 (+1d) | 2027-08-18 → 2027-08-21 (+3d) |  | 13d → 11d |  |
| A56250 | Painting and cladding works for toilet & wash area | 2027-08-18 → 2027-08-19 (+1d) | 2027-08-29 → 2027-08-31 (+2d) |  | 2d → 0d |  |
| A56280 | Sanitary fixtures installation | 2027-08-19 → 2027-08-21 (+2d) | 2027-08-28 → 2027-08-30 (+2d) |  | 13d → 11d |  |
| A56270 | MEP Second Fix | 2027-08-30 → 2027-08-31 (+1d) | 2027-09-05 → 2027-09-07 (+2d) |  | 6d → 4d | A56250, A10890, A10690, A10970 → A56250 |
| A56300 | Installation of toilet partitions | 2027-08-30 → 2027-08-31 (+1d) | 2027-09-09 → 2027-09-12 (+3d) |  | 2d → 0d |  |
| A56310 | Setting out for hygiene & sanitary accessories | 2027-09-13 → 2027-09-12 (-1d) |  |  |  |  |
| 7 | **Portable cabins** | 2027-02-02 → 2027-02-25 (+23d) | 2027-05-04 → 2027-05-29 (+25d) |  |  |  |
| 1 | **Prepration works and foundations** | 2027-02-02 → 2027-02-25 (+23d) | 2027-02-20 → 2027-03-16 (+24d) |  |  |  |
| A56320 | Excavation for cabin foundations / pads | 2027-02-02 → 2027-02-25 (+23d) | 2027-02-08 → 2027-03-04 (+24d) |  | 17d → 6.3d | A93270, A4825 → A93270, A56680 |
| A56330 | RC foundations / plinths | 2027-02-09 → 2027-03-04 (+23d) | 2027-02-15 → 2027-03-11 (+24d) |  | 117d → 96.3d |  |
| A56340 | Backfilling & compaction around pads | 2027-02-16 → 2027-03-11 (+23d) | 2027-02-20 → 2027-03-16 (+24d) |  | 152d → 131.3d |  |
| 2 | **Cabins installation** | 2027-02-21 → 2027-03-16 (+23d) | 2027-05-04 → 2027-05-29 (+25d) |  |  |  |
| A56350 | Alignment & leveling of cabins | 2027-02-21 → 2027-03-16 (+23d) | 2027-03-01 → 2027-03-25 (+24d) |  | 152d → 131.3d | A56340 → A56340, A11040 |
| A56360 | Electrical conduits & DB installation | 2027-03-02 → 2027-03-25 (+23d) | 2027-03-09 → 2027-04-03 (+25d) |  | 157d → 136.3d |  |
| A56370 | Plumbing & drainage rough-in | 2027-03-02 → 2027-03-25 (+23d) | 2027-03-09 → 2027-04-03 (+25d) |  | 157d → 136.3d |  |
| A56380 | Power sockets & switches | 2027-03-02 → 2027-03-25 (+23d) | 2027-03-10 → 2027-04-04 (+25d) |  | 152d → 131.3d |  |
| A56390 | AC units installation | 2027-03-11 → 2027-04-04 (+24d) | 2027-03-15 → 2027-04-08 (+24d) |  | 152d → 131.3d |  |
| A56450 | Final inspection & snag rectification | 2027-04-14 → 2027-05-08 (+24d) | 2027-04-25 → 2027-05-19 (+24d) |  | 117d → 96.3d |  |
| A56460 | Final cleaning & handover | 2027-04-26 → 2027-05-19 (+23d) | 2027-05-04 → 2027-05-29 (+25d) |  | 117d → 96.3d |  |
| 3 | **Parking & Landscape** | 2027-02-16 → 2027-03-11 (+23d) | 2027-04-13 → 2027-05-08 (+25d) |  |  |  |
| A56400 | Parking sub-base & kerbstone works | 2027-02-16 → 2027-03-11 (+23d) | 2027-02-27 → 2027-03-23 (+24d) |  | 117d → 96.3d |  |
| A56410 | Asphalt base & wearing course | 2027-02-28 → 2027-03-23 (+23d) | 2027-03-13 → 2027-04-06 (+24d) |  | 117d → 96.3d |  |
| A56420 | Parking line marking & signage | 2027-03-14 → 2027-04-06 (+23d) | 2027-03-22 → 2027-04-15 (+24d) |  | 117d → 96.3d |  |
| A56430 | Interlock & walkways | 2027-03-23 → 2027-04-15 (+23d) | 2027-04-01 → 2027-04-26 (+25d) |  | 117d → 96.3d |  |
| A56440 | Softscape & irrigation works | 2027-04-03 → 2027-04-26 (+23d) | 2027-04-13 → 2027-05-08 (+25d) |  | 117d → 96.3d |  |
| 1 | **Factories Area** | 2027-02-09 → 2027-03-04 (+23d) | 2027-08-14 → 2027-09-07 (+24d) |  |  |  |
| LR 02 | **Storm Network** | 2027-02-09 → 2027-03-04 (+23d) | 2027-08-14 → 2027-09-07 (+24d) |  |  |  |
| MH-32-01 /MH-32A | **LINE 01** | 2027-02-09 → 2027-03-04 (+23d) | 2027-04-13 → 2027-05-08 (+25d) |  |  |  |
| A93580 | Excavation | 2027-02-09 → 2027-03-04 (+23d) | 2027-02-17 → 2027-03-14 (+25d) |  | 17d → 6.3d |  |
| A93590 | Pipe Laying | 2027-02-18 → 2027-03-14 (+24d) | 2027-03-06 → 2027-03-30 (+24d) |  | 17d → 6.3d |  |
| A93600 | Install Manholes | 2027-02-18 → 2027-03-14 (+24d) | 2027-03-06 → 2027-03-30 (+24d) |  | 35d → 24.3d |  |
| A93610 | Testing & Inspection | 2027-03-14 → 2027-04-06 (+23d) | 2027-03-20 → 2027-04-13 (+24d) |  | 17d → 6.3d |  |
| A93620 | Backfilling & Compaction | 2027-03-14 → 2027-04-06 (+23d) | 2027-03-27 → 2027-04-20 (+24d) |  | 17d → 6.3d |  |
| A93630 | Catch Basin installation and backfilling | 2027-03-21 → 2027-04-13 (+23d) | 2027-04-13 → 2027-05-08 (+25d) |  | 17d → 6.3d |  |
| MH-32-A-04 /MH-32A-03 | **LINE 06** | 2027-04-01 → 2027-04-25 (+24d) | 2027-06-26 → 2027-07-20 (+24d) |  |  |  |
| A93400 | Excavation | 2027-04-01 → 2027-04-25 (+24d) | 2027-04-21 → 2027-05-16 (+25d) |  | 29d → 18.3d |  |
| A93410 | Pipe Laying | 2027-04-11 → 2027-05-04 (+23d) | 2027-05-04 → 2027-05-29 (+25d) |  | 29d → 18.3d |  |

| ID | Task | Start | Finish | Duration | Total float | Predecessors | Other |
| --- | --- | --- | --- | --- | --- | --- | --- |
| A93420 | Install Manholes | 2027-04-11 → 2027-05-04 (+23d) | 2027-05-04 → 2027-05-29 (+25d) |  | 35d → 24.3d |  |  |
| A93430 | Testing & Inspection | 2027-05-12 → 2027-06-05 (+24d) | 2027-05-18 → 2027-06-12 (+25d) |  | 29d → 18.3d |  |  |
| A93440 | Backfilling & Compaction | 2027-05-12 → 2027-06-05 (+24d) | 2027-05-25 → 2027-06-19 (+25d) |  | 29d → 18.3d |  |  |
| A93450 | Catch Basin installation and backfilling | 2027-06-02 → 2027-06-26 (+24d) | 2027-06-26 → 2027-07-20 (+24d) |  | 17d → 6.3d |  |  |
| MH-32-A-05 /MH-32A-04 | **LINE 07** | 2027-04-22 → 2027-05-16 (+24d) | 2027-07-20 → 2027-08-14 (+25d) |  |  |  |  |
| A93280 | Excavation | 2027-04-22 → 2027-05-16 (+24d) | 2027-05-12 → 2027-06-06 (+25d) |  | 32d → 21.3d |  |  |
| A93290 | Pipe Laying | 2027-05-02 → 2027-05-25 (+23d) | 2027-05-25 → 2027-06-19 (+25d) |  | 32d → 21.3d |  |  |
| A93300 | Install Manholes | 2027-05-02 → 2027-05-25 (+23d) | 2027-05-25 → 2027-06-19 (+25d) |  | 38d → 27.3d |  |  |
| A93310 | Testing & Inspection | 2027-06-02 → 2027-06-26 (+24d) | 2027-06-08 → 2027-07-03 (+25d) |  | 32d → 21.3d |  |  |
| A93320 | Backfilling & Compaction | 2027-06-02 → 2027-06-26 (+24d) | 2027-06-15 → 2027-07-10 (+25d) |  | 32d → 21.3d |  |  |
| A93330 | Catch Basin installation and backfilling | 2027-06-27 → 2027-07-20 (+23d) | 2027-07-20 → 2027-08-14 (+25d) |  | 17d → 6.3d |  |  |
| MH-32-A-06 /MH-32A-05 | **LINE 08** | 2027-05-13 → 2027-06-06 (+24d) | 2027-08-14 → 2027-09-07 (+24d) |  |  |  |  |
| A93340 | Excavation | 2027-05-13 → 2027-06-06 (+24d) | 2027-06-02 → 2027-06-27 (+25d) |  | 35d → 24.3d |  |  |
| A93350 | Pipe Laying | 2027-05-23 → 2027-06-15 (+23d) | 2027-06-15 → 2027-07-10 (+25d) |  | 35d → 24.3d |  |  |
| A93360 | Install Manholes | 2027-05-23 → 2027-06-15 (+23d) | 2027-06-12 → 2027-07-06 (+24d) |  | 44d → 33.3d |  |  |
| A93370 | Testing & Inspection | 2027-06-23 → 2027-07-17 (+24d) | 2027-06-29 → 2027-07-24 (+25d) |  | 35d → 24.3d |  |  |
| A93380 | Backfilling & Compaction | 2027-06-23 → 2027-07-17 (+24d) | 2027-07-06 → 2027-07-31 (+25d) |  | 35d → 24.3d |  |  |
| A93390 | Catch Basin installation and backfilling | 2027-07-21 → 2027-08-14 (+24d) | 2027-08-14 → 2027-09-07 (+24d) |  | 17d → 6.3d |  |  |
| MH-32A-02 /MH-32A-01 | **LINE 02** | 2027-02-18 → 2027-03-14 (+24d) | 2027-05-08 → 2027-06-01 (+24d) |  |  |  |  |
| A93520 | Excavation | 2027-02-18 → 2027-03-14 (+24d) | 2027-03-10 → 2027-04-04 (+25d) |  | 23d → 12.3d |  |  |
| A93530 | Pipe Laying | 2027-02-28 → 2027-03-23 (+23d) | 2027-03-23 → 2027-04-17 (+25d) |  | 23d → 12.3d |  |  |
| A93540 | Install Manholes | 2027-02-28 → 2027-03-23 (+23d) | 2027-03-23 → 2027-04-17 (+25d) |  | 41d → 30.3d |  |  |
| A93550 | Testing & Inspection | 2027-03-31 → 2027-04-24 (+24d) | 2027-04-06 → 2027-05-01 (+25d) |  | 23d → 12.3d |  |  |
| A93560 | Backfilling & Compaction | 2027-03-31 → 2027-04-24 (+24d) | 2027-04-13 → 2027-05-08 (+25d) |  | 23d → 12.3d |  |  |
| A93570 | Catch Basin installation and backfilling | 2027-04-14 → 2027-05-08 (+24d) | 2027-05-08 → 2027-06-01 (+24d) |  | 17d → 6.3d |  |  |
| MH-32A-03 /MH-32A-02 | **LINE 03** | 2027-03-11 → 2027-04-04 (+24d) | 2027-06-01 → 2027-06-26 (+25d) |  |  |  |  |
| A93460 | Excavation | 2027-03-11 → 2027-04-04 (+24d) | 2027-03-31 → 2027-04-25 (+25d) |  | 26d → 15.3d |  |  |
| A93470 | Pipe Laying | 2027-03-21 → 2027-04-13 (+23d) | 2027-04-13 → 2027-05-08 (+25d) |  | 26d → 15.3d |  |  |
| A93480 | Install Manholes | 2027-03-21 → 2027-04-13 (+23d) | 2027-04-13 → 2027-05-08 (+25d) |  | 44d → 33.3d |  |  |
| A93490 | Testing & Inspection | 2027-04-21 → 2027-05-15 (+24d) | 2027-04-27 → 2027-05-22 (+25d) |  | 26d → 15.3d |  |  |
| A93500 | Backfilling & Compaction | 2027-04-21 → 2027-05-15 (+24d) | 2027-05-04 → 2027-05-29 (+25d) |  | 26d → 15.3d |  |  |
| A93510 | Catch Basin installation and backfilling | 2027-05-09 → 2027-06-01 (+23d) | 2027-06-01 → 2027-06-26 (+25d) |  | 17d → 6.3d |  |  |
| 2 | **Rehabilitate Road** | 2027-08-15 → 2027-09-07 (+23d) | 2027-11-01 → 2027-11-25 (+24d) |  |  |  |  |
| A93640 | Existing Asphalt milling / Demolishing | 2027-08-15 → 2027-09-07 (+23d) | 2027-08-30 → 2027-09-23 (+24d) |  | 17d → 6.3d | A93390, A5600 → A93390 |  |
| A93650 | Removal & disposal of damaged asphalt | 2027-08-17 → 2027-09-09 (+23d) | 2027-09-01 → 2027-09-26 (+25d) |  | 17d → 6.3d |  |  |
| A93660 | Aggregate base course replacement | 2027-08-29 → 2027-09-21 (+23d) | 2027-09-13 → 2027-10-07 (+24d) |  | 17d → 6.3d |  |  |
| A93670 | Compaction & level check | 2027-09-09 → 2027-10-03 (+24d) | 2027-09-25 → 2027-10-19 (+24d) |  | 17d → 6.3d |  |  |
| A93680 | Prime coat | 2027-09-26 → 2027-10-19 (+23d) | 2027-09-29 → 2027-10-24 (+25d) |  | 17d → 6.3d |  |  |
| A93690 | Asphalt wearing course | 2027-09-28 → 2027-10-21 (+23d) | 2027-10-18 → 2027-11-11 (+24d) |  | 17d → 6.3d |  |  |
| A93700 | Asphalt compaction & finishing | 2027-09-30 → 2027-10-24 (+24d) | 2027-10-20 → 2027-11-14 (+25d) |  | 17d → 6.3d |  |  |
| A93710 | Hardscape, Road markings & signage reinstatement | 2027-10-21 → 2027-11-14 (+24d) | 2027-11-01 → 2027-11-25 (+24d) |  | 17d → 6.3d |  |  |
| 3 | **Project Saving Quantities** | 2027-11-16 → 2027-11-15 (-1d) |  |  |  |  |  |
| A93720 | Project Saving Quantities | 2027-11-16 → 2027-11-15 (-1d) |  |  |  |  |  |
| T&C | **Testing & Commissionin** | 2026-09-15 → 2026-12-23 (+99d) | 2027-12-01 → 2027-05-13 (-202d) |  |  |  |  |
| 1 | **Storm Network Testing & Commissioning Zone A** | 2027-01-17 → 2027-03-08 (+50d) | 2027-01-30 → 2027-03-14 (+43d) |  |  |  |  |
| A93230 | Testing & Commissioning of Storm Network for Zone A | 2027-01-17 → 2027-03-08 (+50d) | 2027-01-30 → 2027-03-14 (+43d) | 12d → 5d | 4d → -32.02d |  | resources Physical Units [38084204 h] → Physical Units [33466448 h] |
| 2 | **Sewage Network Testing & Commissioning Zone A** | 2027-01-18 → 2027-03-16 (+57d) | 2027-02-01 → 2027-03-22 (+49d) |  |  |  |  |
| A93240 | Testing & Commissioning of Sewage Network for Zone A | 2027-01-18 → 2027-03-16 (+57d) | 2027-02-01 → 2027-03-22 (+49d) | 13d → 5d | 1d → -40.26d |  | resources Physical Units [16861096 h] → Physical Units [33466448 h] |
| 3 | **Potable Water Network Testing & Commissioning Zone A** | 2027-01-25 → 2027-05-08 (+103d) | 2027-02-01 → 2027-05-13 (+101d) |  |  |  |  |
| A93180 | Testing & Commissioning of potable Network for Zone A | 2027-01-25 → 2027-05-08 (+103d) | 2027-02-01 → 2027-05-13 (+101d) | 7d → 5d | 2d → -84.1d |  | resources Physical Units [16624606 h] → Physical Units [33466448 h] |
| 4 | **MV Network Testing & Commissioning Zone A** | 2026-09-15 → 2027-04-07 (+204d) | 2026-09-20 → 2027-04-13 (+205d) |  |  |  |  |
| A93210 | Testing & Commissioning of MV Network for Zone B | 2026-09-15 → 2027-04-07 (+204d) | 2026-09-20 → 2027-04-13 (+205d) |  | 10d → -165.31d |  | resources Physical Units [17159254 h] → Physical Units [33466448 h] |
| 5 | **Storm Network Testing & Commissioning Zone B** | 2027-01-13 → 2027-05-02 (+109d) | 2027-02-03 → 2027-05-08 (+94d) |  |  |  |  |
| A93250 | Testing & Commissioning of Storm Network for Zone B | 2027-01-13 → 2027-05-02 (+109d) | 2027-02-03 → 2027-05-08 (+94d) | 19d → 5d | 0d → -79.2d |  | resources Physical Units [20506879 h] → Physical Units [33466448 h] |
| 6 | **Sewage Network Testing & Commissioning Zone B** | 2027-01-20 → 2026-12-23 (-28d) | 2027-02-01 → 2026-12-28 (-35d) |  |  |  |  |
| A93220 | Testing & Commissioning of Sewage Network for Zone B | 2027-01-20 → 2026-12-23 (-28d) | 2027-02-01 → 2026-12-28 (-35d) | 11d → 5d | 1d → 31d |  | resources Physical Units [9079052 h] → Physical Units [33466448 h] |
| 7 | **Potable water Network Testing & Commissioning Zone B** | 2027-01-14 → 2027-04-03 (+79d) | 2027-02-01 → 2027-04-08 (+66d) |  |  |  |  |
| A93190 | Testing & Commissioning of potable Network for Zone A | 2027-01-14 → 2027-04-03 (+79d) | 2027-02-01 → 2027-04-08 (+66d) | 16d → 5d | 0d → -54.02d |  | resources Physical Units [13062190 h] → Physical Units [33466448 h] |
| 8 | **MV Network Testing & Commissioning Zone B** | 2026-09-16 → 2027-01-23 (+129d) | 2026-10-01 → 2027-01-30 (+121d) |  |  |  |  |
| A93200 | Testing & Commissioning of MV Network for Zone B | 2026-09-16 → 2027-01-23 (+129d) | 2026-10-01 → 2027-01-30 (+121d) | 14d → 6d | 0d → -102.8d |  | resources Physical Units [25738881 h] → Physical Units [33466448 h] |
| 2 | **Close-out and Handover** | 2027-09-19 → 2027-09-18 (-1d) |  |  |  |  |  |
| 3 | **Documentation & As-Built** | 2027-09-19 → 2027-09-18 (-1d) |  |  |  |  |  |
| A92740 | Complete As Built Drawings submission | 2027-09-19 → 2027-09-18 (-1d) |  |  |  |  |  |
| A92750 | Complete Commissioning Reports | 2027-09-19 → 2027-09-18 (-1d) |  |  |  |  |  |
| 4 | **Handover & TOC** | 2027-10-05 → 2027-10-04 (-1d) |  |  |  |  |  |
| A92720 | Snag List Clearance | 2027-10-05 → 2027-10-04 (-1d) |  |  |  |  |  |
| A92730 | Final Site Walkdown | 2027-10-05 → 2027-10-04 (-1d) |  |  |  |  |  |
| 5 | **Demobilization** | 2027-10-30 → 2027-10-28 (-2d) |  |  |  |  |  |
| A92670 | Removal of temporary site facilities | 2027-10-30 → 2027-10-28 (-2d) |  |  |  |  |  |
| A92680 | Removal of temporary utilities, fencing & access gates | 2027-10-30 → 2027-10-28 (-2d) |  |  |  |  |  |

| ID | Task | Start |
| --- | --- | --- |
| A92690 | Demobilization of construction equipment & machinery | 2027-10-30 → 2027-10-28 (-2d) |
| A92700 | Final site cleaning & housekeeping | 2027-11-16 → 2027-11-15 (-1d) |
| A92710 | Final site inspection & clearance | 2027-11-16 → 2027-11-15 (-1d) |
